,task_id,proj_id,wbs_id,clndr_id,est_wt,phys_complete_pct,rev_fdbk_flag,lock_plan_flag,auto_compute_act_flag,complete_pct_type,task_type,duration_type,review_type,status_code,task_code,task_name,rsrc_id,total_float_hr_cnt,free_float_hr_cnt,remain_drtn_hr_cnt,act_work_qty,remain_work_qty,target_work_qty,target_drtn_hr_cnt,target_equip_qty,act_equip_qty,remain_equip_qty,cstr_date,act_start_date,act_end_date,late_start_date,late_end_date,expect_end_date,early_start_date,early_end_date,restart_date,reend_date,target_start_date,target_end_date,review_end_date,rem_late_start_date,rem_late_end_date,cstr_type,priority_type,suspend_date,resume_date,float_path,float_path_order,guid,tmpl_guid,cstr_date2,cstr_type2,driving_path_flag,act_this_per_work_qty,act_this_per_equip_qty,external_early_start_date,external_late_end_date,create_date,update_date,create_user,update_user,old_restart_date,old_reend_date,old_remain_drtn_hr_cnt
0,90494,793,11878,841,0,0,N,N,N,CP_Drtn,TT_Mile,DT_FixedDrtn,RV_OK,TK_NotStart,A1000,Start project,,0,0,0,0,0,0,0,0,0,0,,,,2010-07-12 08:00,2010-07-12 08:00,,2010-07-12 08:00,2010-07-12 08:00,2010-07-12 08:00,2010-07-12 08:00,2010-07-12 08:00,2010-07-12 08:00,,2010-07-12 08:00,2010-07-12 08:00,,PT_Normal,,,,,XpJJExDQokuN0wPtrcq36g,,,,Y,0,0,,,2010-08-28 10:04,2010-09-18 13:26,admin,admin,2010-07-12 08:00,2010-07-12 08:00,0
1,90495,793,11878,841,0,0,N,N,N,CP_Drtn,TT_FinMile,DT_FixedDrtn,RV_OK,TK_NotStart,A1010,Finish project,,0,0,0,0,0,0,0,0,0,0,,,,2010-11-15 16:00,2010-11-15 16:00,,2010-11-15 16:00,2010-11-15 16:00,2010-11-15 16:00,2010-11-15 16:00,2010-11-15 16:00,2010-11-15 16:00,,2010-11-15 16:00,2010-11-15 16:00,,PT_Normal,,,,,wDr5xkawYkWsENvs5KEHng,,,,Y,0,0,,,2010-08-28 10:04,2010-09-18 13:26,admin,admin,2010-11-15 16:00,2010-11-15 16:00,0
2,90496,793,11878,841,1,0,N,N,N,CP_Drtn,TT_Task,DT_FixedDUR2,RV_OK,TK_NotStart,A1020,Mobilization,,800,800,64,0,0,0,64,0,0,0,,,,2010-11-07 08:00,2010-11-15 16:00,,2010-07-12 08:00,2010-07-20 16:00,2010-07-12 08:00,2010-07-20 16:00,2010-07-12 08:00,2010-07-20 16:00,,2010-11-07 08:00,2010-11-15 16:00,,PT_Normal,,,,,jare7oAx2EyTNGryoKJ5tQ,,,,N,0,0,,,2010-08-28 10:04,2010-09-16 19:14,admin,admin,2010-07-12 08:00,2010-07-20 16:00,64
3,90497,793,11878,841,0,0,N,N,N,CP_Drtn,TT_Mile,DT_FixedDrtn,RV_OK,TK_NotStart,A1320,Receive issue for construction drawings,,15.9833333333333,8,0,0,0,0,0,0,0,0,,,,2010-07-13 15:59,2010-07-13 15:59,,2010-07-12 08:00,2010-07-12 08:00,2010-07-12 08:00,2010-07-12 08:00,2010-07-12 08:00,2010-07-12 08:00,,2010-07-13 15:59,2010-07-13 15:59,,PT_Normal,,,,,gIUFbvdJmUu3QOAOpxfKbw,,,,N,0,0,,,2010-08-28 10:04,2010-09-18 13:26,admin,admin,2010-07-12 08:00,2010-07-12 08:00,0
4,90498,793,11885,841,1,0,N,N,N,CP_Drtn,TT_Task,DT_FixedDUR2,RV_OK,TK_NotStart,A2060,Formworks for R.C raft,,0,0,16,0,80,80,16,0,0,0,,,,2010-09-05 08:00,2010-09-06 16:00,,2010-09-05 08:00,2010-09-06 16:00,2010-09-05 08:00,2010-09-06 16:00,2010-09-05 08:00,2010-09-06 16:00,,2010-09-05 08:00,2010-09-06 16:00,,PT_Normal,,,,,ENDoiNrxM0GUxOTA+VROEA,,,,Y,0,0,,,2010-08-28 10:04,2010-09-18 13:26,admin,admin,2010-09-05 08:00,2010-09-06 16:00,16
5,90499,793,11885,841,1,0,N,N,N,CP_Drtn,TT_Task,DT_FixedDUR2,RV_OK,TK_NotStart,A2070,Rebar for R.C raft,2117,0,0,24,0,120,120,24,0,0,0,,,,2010-09-05 08:00,2010-09-07 16:00,,2010-09-05 08:00,2010-09-07 16:00,2010-09-05 08:00,2010-09-07 16:00,2010-09-05 08:00,2010-09-07 16:00,,2010-09-05 08:00,2010-09-07 16:00,,PT_Normal,,,,,VXVraN27506Pdhebiox5GQ,,,,Y,0,0,,,2010-08-28 10:04,2010-09-18 13:26,admin,admin,2010-09-05 08:00,2010-09-07 16:00,24
6,90500,793,11885,841,1,0,N,N,N,CP_Drtn,TT_Task,DT_FixedDUR2,RV_OK,TK_NotStart,A2080,Pouring For R.C raft,,0,0,8,0,40,40,8,0,0,0,,,,2010-09-18 08:00,2010-09-18 16:00,,2010-09-18 08:00,2010-09-18 16:00,2010-09-18 08:00,2010-09-18 16:00,2010-09-18 08:00,2010-09-18 16:00,,2010-09-18 08:00,2010-09-18 16:00,,PT_Normal,,,,,crEzemkkhESBJHcdsLEhXQ,,,,Y,0,0,,,2010-08-28 10:04,2010-09-18 13:26,admin,admin,2010-09-18 08:00,2010-09-18 16:00,8
7,90501,793,11885,841,1,0,N,N,N,CP_Drtn,TT_Task,DT_FixedDUR2,RV_OK,TK_NotStart,A2090,Formwork For Tank walls,,0,0,64,0,240,240,64,0,0,0,,,,2010-09-20 08:00,2010-09-28 16:00,,2010-09-20 08:00,2010-09-28 16:00,2010-09-20 08:00,2010-09-28 16:00,2010-09-20 08:00,2010-09-28 16:00,,2010-09-20 08:00,2010-09-28 16:00,,PT_Normal,,,,,dW02tXC6ukilVUzw72581g,,,,Y,0,0,,,2010-08-28 10:04,2010-09-18 13:26,admin,admin,2010-09-20 08:00,2010-09-28 16:00,64
8,90502,793,11885,841,1,0,N,N,N,CP_Drtn,TT_Task,DT_FixedDUR2,RV_OK,TK_NotStart,A2100,Rebar For Tank walls,2117,0,0,48,0,120,120,48,0,0,0,,,,2010-09-22 08:00,2010-09-28 16:00,,2010-09-22 08:00,2010-09-28 16:00,2010-09-22 08:00,2010-09-28 16:00,2010-09-22 08:00,2010-09-28 16:00,,2010-09-22 08:00,2010-09-28 16:00,,PT_Normal,,,,,y2mQPOL6EUC5JCPK4ORe1g,,,,Y,0,0,,,2010-08-28 10:04,2010-09-18 13:26,admin,admin,2010-09-22 08:00,2010-09-28 16:00,48
9,90503,793,11885,841,1,0,N,N,N,CP_Drtn,TT_Task,DT_FixedDUR2,RV_OK,TK_NotStart,A2110,Pouring For Tank walls,,0,0,8,0,40,40,8,0,0,0,,,,2010-09-30 08:00,2010-09-30 16:00,,2010-09-30 08:00,2010-09-30 16:00,2010-09-30 08:00,2010-09-30 16:00,2010-09-30 08:00,2010-09-30 16:00,,2010-09-30 08:00,2010-09-30 16:00,,PT_Normal,,,,,vlwWIdHsR0Wt5+AUQ5Ft4Q,,,,Y,0,0,,,2010-08-28 10:04,2010-09-18 13:26,admin,admin,2010-09-30 08:00,2010-09-30 16:00,8
10,90504,793,11885,841,1,0,N,N,N,CP_Drtn,TT_Task,DT_FixedDUR2,RV_OK,TK_NotStart,A2120,Formwork For Tank Slab,,0,0,96,0,120,120,96,0,0,0,,,,2010-10-02 08:00,2010-10-14 16:00,,2010-10-02 08:00,2010-10-14 16:00,2010-10-02 08:00,2010-10-14 16:00,2010-10-02 08:00,2010-10-14 16:00,,2010-10-02 08:00,2010-10-14 16:00,,PT_Normal,,,,,EWJt+fChDEiaEFomyfPCqA,,,,Y,0,0,,,2010-08-28 10:04,2010-09-18 13:26,admin,admin,2010-10-02 08:00,2010-10-14 16:00,96
11,90505,793,11885,841,1,0,N,N,N,CP_Drtn,TT_Task,DT_FixedDUR2,RV_OK,TK_NotStart,A2130,Rebar For Tank Slab,2117,0,0,48,0,160,160,48,0,0,0,,,,2010-10-14 08:00,2010-10-20 16:00,,2010-10-14 08:00,2010-10-20 16:00,2010-10-14 08:00,2010-10-20 16:00,2010-10-14 08:00,2010-10-20 16:00,,2010-10-14 08:00,2010-10-20 16:00,,PT_Normal,,,,,MkPWQbnLI0STcrvYC/9e0w,,,,Y,0,0,,,2010-08-28 10:04,2010-09-18 13:26,admin,admin,2010-10-14 08:00,2010-10-20 16:00,48
12,90506,793,11885,841,1,0,N,N,N,CP_Drtn,TT_Task,DT_FixedDUR2,RV_OK,TK_NotStart,A2140,Pouring  For Tank slab,,0,0,8,0,40,40,8,0,0,0,,,,2010-10-23 08:00,2010-10-23 16:00,,2010-10-23 08:00,2010-10-23 16:00,2010-10-23 08:00,2010-10-23 16:00,2010-10-23 08:00,2010-10-23 16:00,,2010-10-23 08:00,2010-10-23 16:00,,PT_Normal,,,,,jLcz7IiQvkiugF1DKP6Zxg,,,,Y,0,0,,,2010-08-28 10:04,2010-09-18 13:26,admin,admin,2010-10-23 08:00,2010-10-23 16:00,8
13,90507,793,11885,841,1,0,N,N,N,CP_Drtn,TT_Task,DT_FixedDUR2,RV_OK,TK_NotStart,A2150,Internal insulation,,0,0,40,0,0,0,40,0,0,0,,,,2010-10-31 08:00,2010-11-04 16:00,,2010-10-31 08:00,2010-11-04 16:00,2010-10-31 08:00,2010-11-04 16:00,2010-10-31 08:00,2010-11-04 16:00,,2010-10-31 08:00,2010-11-04 16:00,,PT_Normal,,,,,z99TBcNbEUS8b6fx7LjcQg,,,,Y,0,0,,,2010-08-28 10:04,2010-09-18 13:26,admin,admin,2010-10-31 08:00,2010-11-04 16:00,40
14,90508,793,11885,841,1,0,N,N,N,CP_Drtn,TT_Task,DT_FixedDUR2,RV_OK,TK_NotStart,A2160,External insulation,,0,0,40,0,0,0,40,0,0,0,,,,2010-11-06 08:00,2010-11-10 16:00,,2010-11-06 08:00,2010-11-10 16:00,2010-11-06 08:00,2010-11-10 16:00,2010-11-06 08:00,2010-11-10 16:00,,2010-11-06 08:00,2010-11-10 16:00,,PT_Normal,,,,,zzhaafXnRE2+4XGp8zKh+w,,,,Y,0,0,,,2010-08-28 10:04,2010-09-18 13:26,admin,admin,2010-11-06 08:00,2010-11-10 16:00,40
15,90509,793,11885,841,0,0,N,N,N,CP_Drtn,TT_FinMile,DT_FixedDrtn,RV_OK,TK_NotStart,A2079,M&E conduits For R.C raft (by others),,0,0,0,0,0,0,0,0,0,0,,,,2010-09-16 16:00,2010-09-16 16:00,,2010-09-16 16:00,2010-09-16 16:00,2010-09-16 16:00,2010-09-16 16:00,2010-09-16 16:00,2010-09-16 16:00,,2010-09-16 16:00,2010-09-16 16:00,,PT_Normal,,,,,9hOfICYTHEihIc6BPgH5Eg,,,,Y,0,0,,,2010-08-28 10:04,2010-09-18 13:26,admin,admin,2010-09-16 16:00,2010-09-16 16:00,0
16,90510,793,11885,841,0,0,N,N,N,CP_Drtn,TT_FinMile,DT_FixedDrtn,RV_OK,TK_NotStart,A2119,M&E conduits For tank's slab (by others),,0,0,0,0,0,0,0,0,0,0,,,,2010-10-20 16:00,2010-10-20 16:00,,2010-10-20 16:00,2010-10-20 16:00,2010-10-20 16:00,2010-10-20 16:00,2010-10-20 16:00,2010-10-20 16:00,,2010-10-20 16:00,2010-10-20 16:00,,PT_Normal,,,,,xCyMbXo+mUKd0YaLA8z9dg,,,,Y,0,0,,,2010-08-28 10:04,2010-09-18 13:26,admin,admin,2010-10-20 16:00,2010-10-20 16:00,0
17,90511,793,11885,841,0,0,N,N,N,CP_Drtn,TT_FinMile,DT_FixedDrtn,RV_OK,TK_NotStart,A2109,M&E conduits For R.C walls (by others),,7.98333333333333,7.98333333333333,0,0,0,0,0,0,0,0,,,,2010-09-27 16:00,2010-09-27 16:00,,2010-09-27 08:01,2010-09-27 08:01,2010-09-27 08:01,2010-09-27 08:01,2010-09-27 08:01,2010-09-27 08:01,,2010-09-27 16:00,2010-09-27 16:00,,PT_Normal,,,,,gOj5YZEOnkOIiH0NHlAubg,,,,N,0,0,,,2010-08-28 10:04,2010-09-18 13:26,admin,admin,2010-09-27 08:01,2010-09-27 08:01,0
18,90512,793,11894,841,1,0,N,N,N,CP_Drtn,TT_Task,DT_FixedDUR2,RV_OK,TK_NotStart,A2380,Backfilling Around Foundation,,8,0,144,0,0,0,144,0,0,0,,,,2010-10-24 08:00,2010-11-13 16:00,,2010-10-23 08:00,2010-11-11 16:00,2010-10-23 08:00,2010-11-11 16:00,2010-10-23 08:00,2010-11-11 16:00,,2010-10-24 08:00,2010-11-13 16:00,,PT_Normal,,,,,CxyZ3IVt9EabUZPqsf64PQ,,,,N,0,0,,,2010-08-28 10:04,2010-09-16 19:14,admin,admin,2010-10-23 08:00,2010-11-11 16:00,144
19,90513,793,11895,841,1,0,N,N,N,CP_Drtn,TT_Task,DT_FixedDUR2,RV_OK,TK_NotStart,A2400,Handingover,,8,8,16,0,0,0,16,0,0,0,,,,2010-11-14 08:00,2010-11-15 16:00,,2010-11-13 08:00,2010-11-14 16:00,2010-11-13 08:00,2010-11-14 16:00,2010-11-13 08:00,2010-11-14 16:00,,2010-11-14 08:00,2010-11-15 16:00,,PT_Normal,,,,,SbsRA/L8nkemO3BHl7bpKw,,,,N,0,0,,,2010-08-28 10:04,2010-09-16 19:14,admin,admin,2010-11-13 08:00,2010-11-14 16:00,16
20,90514,793,11892,841,1,0,N,N,N,CP_Drtn,TT_Task,DT_FixedDUR2,RV_OK,TK_NotStart,A2370,Backfilling Around Foundation,,144,0,152,0,0,0,152,0,0,0,,,,2010-10-23 08:00,2010-11-13 16:00,,2010-10-02 08:00,2010-10-23 16:00,2010-10-02 08:00,2010-10-23 16:00,2010-10-02 08:00,2010-10-23 16:00,,2010-10-23 08:00,2010-11-13 16:00,,PT_Normal,,,,,dTc6fGhT+E6JyIcRrU0v1A,,,,N,0,0,,,2010-08-28 10:04,2010-09-16 19:14,admin,admin,2010-10-02 08:00,2010-10-23 16:00,152
21,90515,793,11893,841,1,0,N,N,N,CP_Drtn,TT_Task,DT_FixedDUR2,RV_OK,TK_NotStart,A2390,Handingover,,144,144,16,0,0,0,16,0,0,0,,,,2010-11-14 08:00,2010-11-15 16:00,,2010-10-24 08:00,2010-10-25 16:00,2010-10-24 08:00,2010-10-25 16:00,2010-10-24 08:00,2010-10-25 16:00,,2010-11-14 08:00,2010-11-15 16:00,,PT_Normal,,,,,5ZRorqaX40m30D1+NELZQw,,,,N,0,0,,,2010-08-28 10:04,2010-09-16 19:14,admin,admin,2010-10-24 08:00,2010-10-25 16:00,16
22,90516,793,11882,841,0,0,N,N,N,CP_Drtn,TT_FinMile,DT_FixedDrtn,RV_OK,TK_NotStart,A1260,submittals of all tank's shop drawings,,0,0,0,0,0,0,0,0,0,0,,,,2010-07-19 16:00,2010-07-19 16:00,,2010-07-19 16:00,2010-07-19 16:00,2010-07-19 16:00,2010-07-19 16:00,2010-07-19 16:00,2010-07-19 16:00,,2010-07-19 16:00,2010-07-19 16:00,,PT_Normal,,,,,PrNy+qgaDkuSM7voyuYDFA,,,,Y,0,0,,,2010-08-28 10:04,2010-09-18 13:26,admin,admin,2010-07-19 16:00,2010-07-19 16:00,0
23,90517,793,11882,841,0,0,N,N,N,CP_Drtn,TT_FinMile,DT_FixedDrtn,RV_OK,TK_NotStart,A2170,Approval of all tank's shop drawings,,0,0,0,0,0,0,0,0,0,0,,,,2010-07-22 16:00,2010-07-22 16:00,,2010-07-22 16:00,2010-07-22 16:00,2010-07-22 16:00,2010-07-22 16:00,2010-07-22 16:00,2010-07-22 16:00,,2010-07-22 16:00,2010-07-22 16:00,,PT_Normal,,,,,GEiE9DzWoE+ZcY5abTqX5w,,,,Y,0,0,,,2010-08-28 10:04,2010-09-18 13:26,admin,admin,2010-07-22 16:00,2010-07-22 16:00,0
24,90518,793,11887,841,0,0,N,N,N,CP_Drtn,TT_FinMile,DT_FixedDrtn,RV_OK,TK_NotStart,A1200,Submittal of All R.C raft dimension,,248,0,0,0,0,0,0,0,0,0,,,,2010-08-26 16:00,2010-08-26 16:00,,2010-07-21 16:00,2010-07-21 16:00,2010-07-21 16:00,2010-07-21 16:00,2010-07-21 16:00,2010-07-21 16:00,,2010-08-26 16:00,2010-08-26 16:00,,PT_Normal,,,,,F18MQwdWzEqHInqeqHu6zQ,TnE0Il9fMEmUAPp54M1FxQ,,,N,0,0,,,2010-08-28 10:04,2010-09-16 19:14,admin,admin,2010-07-21 16:00,2010-07-21 16:00,0
25,90519,793,11887,841,0,0,N,N,N,CP_Drtn,TT_FinMile,DT_FixedDrtn,RV_OK,TK_NotStart,A1210,Submittal of All column layout,,360,0,0,0,0,0,0,0,0,0,,,,2010-09-13 16:00,2010-09-13 16:00,,2010-07-21 16:00,2010-07-21 16:00,2010-07-21 16:00,2010-07-21 16:00,2010-07-21 16:00,2010-07-21 16:00,,2010-09-13 16:00,2010-09-13 16:00,,PT_Normal,,,,,oVS7rdvDOU6H+6c3WoasXw,Gp+LX5Ae4kObTifd8mF+VA,,,N,0,0,,,2010-08-28 10:04,2010-09-16 19:14,admin,admin,2010-07-21 16:00,2010-07-21 16:00,0
26,90520,793,11887,841,0,0,N,N,N,CP_Drtn,TT_FinMile,DT_FixedDrtn,RV_OK,TK_NotStart,A1220,Submittal of All R.C raft RFT&starters,,696,0,0,0,0,0,0,0,0,0,,,,2010-11-11 16:00,2010-11-11 16:00,,2010-08-01 16:00,2010-08-01 16:00,2010-08-01 16:00,2010-08-01 16:00,2010-08-01 16:00,2010-08-01 16:00,,2010-11-11 16:00,2010-11-11 16:00,,PT_Normal,,,,,6QlunVhxWU6LnKeBpvakiw,xzvMiT8HoUauXhFY1S+PkA,,,N,0,0,,,2010-08-28 10:04,2010-09-16 19:14,admin,admin,2010-08-01 16:00,2010-08-01 16:00,0
27,90521,793,11887,841,0,0,N,N,N,CP_Drtn,TT_FinMile,DT_FixedDrtn,RV_OK,TK_NotStart,A1230,Submittal of All basement columns & walls RFT,,656,0,0,0,0,0,0,0,0,0,,,,2010-11-13 16:00,2010-11-13 16:00,,2010-08-08 16:00,2010-08-08 16:00,2010-08-08 16:00,2010-08-08 16:00,2010-08-08 16:00,2010-08-08 16:00,,2010-11-13 16:00,2010-11-13 16:00,,PT_Normal,,,,,Agr4a6le50GAiEs89xNokw,vizYnfHl90u2hozwrJxUGA,,,N,0,0,,,2010-08-28 10:04,2010-09-16 19:14,admin,admin,2010-08-08 16:00,2010-08-08 16:00,0
28,90522,793,11887,841,0,0,N,N,N,CP_Drtn,TT_FinMile,DT_FixedDrtn,RV_OK,TK_NotStart,A1240,Submittal of All basement slab concrete dimension,,520,0,0,0,0,0,0,0,0,0,,,,2010-10-31 16:00,2010-10-31 16:00,,2010-08-15 16:00,2010-08-15 16:00,2010-08-15 16:00,2010-08-15 16:00,2010-08-15 16:00,2010-08-15 16:00,,2010-10-31 16:00,2010-10-31 16:00,,PT_Normal,,,,,GHMTzFlpnEO9eNydgRWkwA,YjPP8Mnn70CflT1uK45yIg,,,N,0,0,,,2010-08-28 10:04,2010-09-16 19:14,admin,admin,2010-08-15 16:00,2010-08-15 16:00,0
29,90523,793,11887,841,0,0,N,N,N,CP_Drtn,TT_FinMile,DT_FixedDrtn,RV_OK,TK_NotStart,A1250,Submittal of All basement slab RFT,,528,0,0,0,0,0,0,0,0,0,,,,2010-11-11 16:00,2010-11-11 16:00,,2010-08-25 16:00,2010-08-25 16:00,2010-08-25 16:00,2010-08-25 16:00,2010-08-25 16:00,2010-08-25 16:00,,2010-11-11 16:00,2010-11-11 16:00,,PT_Normal,,,,,sE6PLZBVt0yAex6+4Kq+og,dOxninhx50WjRMbSb0UpMw,,,N,0,0,,,2010-08-28 10:04,2010-09-16 19:14,admin,admin,2010-08-25 16:00,2010-08-25 16:00,0
30,90524,793,11888,841,0,0,N,N,N,CP_Drtn,TT_FinMile,DT_FixedDrtn,RV_OK,TK_NotStart,A1201,Approval of All R.C raft dimension,,248,0,0,0,0,0,0,0,0,0,,,,2010-08-30 16:00,2010-08-30 16:00,,2010-07-25 16:00,2010-07-25 16:00,2010-07-25 16:00,2010-07-25 16:00,2010-07-25 16:00,2010-07-25 16:00,,2010-08-30 16:00,2010-08-30 16:00,,PT_Normal,,,,,6Q52hTxvX0ehjUILrToMoQ,TQUwoveBKEO+M4EHNTWADA,,,N,0,0,,,2010-08-28 10:04,2010-09-16 19:14,admin,admin,2010-07-25 16:00,2010-07-25 16:00,0
31,90525,793,11888,841,0,0,N,N,N,CP_Drtn,TT_FinMile,DT_FixedDrtn,RV_OK,TK_NotStart,A1211,Approval of All column layout,,360,112,0,0,0,0,0,0,0,0,,,,2010-09-16 16:00,2010-09-16 16:00,,2010-07-25 16:00,2010-07-25 16:00,2010-07-25 16:00,2010-07-25 16:00,2010-07-25 16:00,2010-07-25 16:00,,2010-09-16 16:00,2010-09-16 16:00,,PT_Normal,,,,,NuCg6wq0WkeZMGKCILNOgA,ZHXePO0d70+Nlw1C97nwNQ,,,N,0,0,,,2010-08-28 10:04,2010-09-16 19:14,admin,admin,2010-07-25 16:00,2010-07-25 16:00,0
32,90526,793,11888,841,0,0,N,N,N,CP_Drtn,TT_FinMile,DT_FixedDrtn,RV_OK,TK_NotStart,A1221,Approval of All R.C raft RFT&starters,,696,696,0,0,0,0,0,0,0,0,,,,2010-11-15 16:00,2010-11-15 16:00,,2010-08-04 16:00,2010-08-04 16:00,2010-08-04 16:00,2010-08-04 16:00,2010-08-04 16:00,2010-08-04 16:00,,2010-11-15 16:00,2010-11-15 16:00,,PT_Normal,,,,,BZW9DFYsAk2NOJViXESUDA,hEK1OTMaS023lip5X1r4aw,,,N,0,0,,,2010-08-28 10:04,2010-09-16 19:14,admin,admin,2010-08-04 16:00,2010-08-04 16:00,0
33,90527,793,11888,841,0,0,N,N,N,CP_Drtn,TT_FinMile,DT_FixedDrtn,RV_OK,TK_NotStart,A1231,Approval of All basement columns & walls RFT,,656,656,0,0,0,0,0,0,0,0,,,,2010-11-15 16:00,2010-11-15 16:00,,2010-08-10 16:00,2010-08-10 16:00,2010-08-10 16:00,2010-08-10 16:00,2010-08-10 16:00,2010-08-10 16:00,,2010-11-15 16:00,2010-11-15 16:00,,PT_Normal,,,,,TeYLmTvZLkuEj5AUgVIvog,FncT+B/w9ku+6p55HRGrYg,,,N,0,0,,,2010-08-28 10:04,2010-09-16 19:14,admin,admin,2010-08-10 16:00,2010-08-10 16:00,0
34,90528,793,11888,841,0,0,N,N,N,CP_Drtn,TT_FinMile,DT_FixedDrtn,RV_OK,TK_NotStart,A1241,Approval of All basement slab concrete dimension,,520,384,0,0,0,0,0,0,0,0,,,,2010-11-03 16:00,2010-11-03 16:00,,2010-08-18 16:00,2010-08-18 16:00,2010-08-18 16:00,2010-08-18 16:00,2010-08-18 16:00,2010-08-18 16:00,,2010-11-03 16:00,2010-11-03 16:00,,PT_Normal,,,,,F7gjgc74vEiqtUlgRijCxQ,hfb3em5cr0aQv21tG6zahA,,,N,0,0,,,2010-08-28 10:04,2010-09-16 19:14,admin,admin,2010-08-18 16:00,2010-08-18 16:00,0
35,90529,793,11888,841,0,0,N,N,N,CP_Drtn,TT_FinMile,DT_FixedDrtn,RV_OK,TK_NotStart,A1251,Approval of All basement slab RFT,,528,528,0,0,0,0,0,0,0,0,,,,2010-11-15 16:00,2010-11-15 16:00,,2010-08-29 16:00,2010-08-29 16:00,2010-08-29 16:00,2010-08-29 16:00,2010-08-29 16:00,2010-08-29 16:00,,2010-11-15 16:00,2010-11-15 16:00,,PT_Normal,,,,,3JeZPGVVgUm6zSzRdrLRfg,UjuoEPoriEmi2KpzXdDJUQ,,,N,0,0,,,2010-08-28 10:04,2010-09-16 19:14,admin,admin,2010-08-29 16:00,2010-08-29 16:00,0
36,90530,793,11889,841,0,0,N,N,N,CP_Drtn,TT_FinMile,DT_FixedDrtn,RV_OK,TK_NotStart,A1140,Submittal of All R.C raft dimension,,8,0,0,0,0,0,0,0,0,0,,,,2010-07-13 16:00,2010-07-13 16:00,,2010-07-12 16:00,2010-07-12 16:00,2010-07-12 16:00,2010-07-12 16:00,2010-07-12 16:00,2010-07-12 16:00,,2010-07-13 16:00,2010-07-13 16:00,,PT_Normal,,,,,5T7SKwd7fkqez1Ne5RZR6Q,,,,N,0,0,,,2010-08-28 10:04,2010-09-16 19:14,admin,admin,2010-07-12 16:00,2010-07-12 16:00,0
37,90531,793,11889,841,0,0,N,N,N,CP_Drtn,TT_FinMile,DT_FixedDrtn,RV_OK,TK_NotStart,A1150,Submittal of All column layout,,24,0,0,0,0,0,0,0,0,0,,,,2010-07-15 16:00,2010-07-15 16:00,,2010-07-12 16:00,2010-07-12 16:00,2010-07-12 16:00,2010-07-12 16:00,2010-07-12 16:00,2010-07-12 16:00,,2010-07-15 16:00,2010-07-15 16:00,,PT_Normal,,,,,pMK7xwjd4U+ejjnp0Laoyg,,,,N,0,0,,,2010-08-28 10:04,2010-09-16 19:14,admin,admin,2010-07-12 16:00,2010-07-12 16:00,0
38,90532,793,11889,841,0,0,N,N,N,CP_Drtn,TT_FinMile,DT_FixedDrtn,RV_OK,TK_NotStart,A1160,Submittal of All R.C raft RFT&starters,,768,0,0,0,0,0,0,0,0,0,,,,2010-11-11 16:00,2010-11-11 16:00,,2010-07-21 16:00,2010-07-21 16:00,2010-07-21 16:00,2010-07-21 16:00,2010-07-21 16:00,2010-07-21 16:00,,2010-11-11 16:00,2010-11-11 16:00,,PT_Normal,,,,,kJlLfZDJZE2565Dc+3jVHw,,,,N,0,0,,,2010-08-28 10:04,2010-09-16 19:14,admin,admin,2010-07-21 16:00,2010-07-21 16:00,0
39,90533,793,11889,841,0,0,N,N,N,CP_Drtn,TT_FinMile,DT_FixedDrtn,RV_OK,TK_NotStart,A1170,Submittal of All basement columns & walls RFT,,384,0,0,0,0,0,0,0,0,0,,,,2010-09-27 16:00,2010-09-27 16:00,,2010-08-01 16:00,2010-08-01 16:00,2010-08-01 16:00,2010-08-01 16:00,2010-08-01 16:00,2010-08-01 16:00,,2010-09-27 16:00,2010-09-27 16:00,,PT_Normal,,,,,c0ds5nsBWUavdiIDoqlJIw,,,,N,0,0,,,2010-08-28 10:04,2010-09-16 19:14,admin,admin,2010-08-01 16:00,2010-08-01 16:00,0
40,90534,793,11889,841,0,0,N,N,N,CP_Drtn,TT_FinMile,DT_FixedDrtn,RV_OK,TK_NotStart,A1180,Submittal of All basement slab concrete dimension,,536,0,0,0,0,0,0,0,0,0,,,,2010-10-26 16:00,2010-10-26 16:00,,2010-08-08 16:00,2010-08-08 16:00,2010-08-08 16:00,2010-08-08 16:00,2010-08-08 16:00,2010-08-08 16:00,,2010-10-26 16:00,2010-10-26 16:00,,PT_Normal,,,,,vCWPdbb2aUaGRHHpug/yjQ,,,,N,0,0,,,2010-08-28 10:04,2010-09-16 19:14,admin,admin,2010-08-08 16:00,2010-08-08 16:00,0
41,90535,793,11889,841,0,0,N,N,N,CP_Drtn,TT_FinMile,DT_FixedDrtn,RV_OK,TK_NotStart,A1190,Submittal of All basement slab RFT,,488,0,0,0,0,0,0,0,0,0,,,,2010-10-26 16:00,2010-10-26 16:00,,2010-08-15 16:00,2010-08-15 16:00,2010-08-15 16:00,2010-08-15 16:00,2010-08-15 16:00,2010-08-15 16:00,,2010-10-26 16:00,2010-10-26 16:00,,PT_Normal,,,,,+yc3sWIZHUCc0rNUxryu1w,,,,N,0,0,,,2010-08-28 10:04,2010-09-16 19:14,admin,admin,2010-08-15 16:00,2010-08-15 16:00,0
42,90536,793,11891,841,0,0,N,N,N,CP_Drtn,TT_FinMile,DT_FixedDrtn,RV_OK,TK_NotStart,A1141,Approval of All R.C raft dimension,,8,0,0,0,0,0,0,0,0,0,,,,2010-07-17 16:00,2010-07-17 16:00,,2010-07-15 16:00,2010-07-15 16:00,2010-07-15 16:00,2010-07-15 16:00,2010-07-15 16:00,2010-07-15 16:00,,2010-07-17 16:00,2010-07-17 16:00,,PT_Normal,,,,,zcBc5mhSOEGCFur7Ni0htw,,,,N,0,0,,,2010-08-28 10:04,2010-09-16 19:14,admin,admin,2010-07-15 16:00,2010-07-15 16:00,0
43,90537,793,11891,841,0,0,N,N,N,CP_Drtn,TT_FinMile,DT_FixedDrtn,RV_OK,TK_NotStart,A1151,Approval of All column layout,,24,16,0,0,0,0,0,0,0,0,,,,2010-07-19 16:00,2010-07-19 16:00,,2010-07-15 16:00,2010-07-15 16:00,2010-07-15 16:00,2010-07-15 16:00,2010-07-15 16:00,2010-07-15 16:00,,2010-07-19 16:00,2010-07-19 16:00,,PT_Normal,,,,,1LRbm5ruRkasUuGE5Vqd0g,,,,N,0,0,,,2010-08-28 10:04,2010-09-16 19:14,admin,admin,2010-07-15 16:00,2010-07-15 16:00,0
44,90538,793,11891,841,0,0,N,N,N,CP_Drtn,TT_FinMile,DT_FixedDrtn,RV_OK,TK_NotStart,A1161,Approval of All R.C raft RFT&starters,,768,768,0,0,0,0,0,0,0,0,,,,2010-11-15 16:00,2010-11-15 16:00,,2010-07-25 16:00,2010-07-25 16:00,2010-07-25 16:00,2010-07-25 16:00,2010-07-25 16:00,2010-07-25 16:00,,2010-11-15 16:00,2010-11-15 16:00,,PT_Normal,,,,,Y5CGvyOk10+NnvmrURx7Mg,,,,N,0,0,,,2010-08-28 10:04,2010-09-16 19:14,admin,admin,2010-07-25 16:00,2010-07-25 16:00,0
45,90539,793,11891,841,0,0,N,N,N,CP_Drtn,TT_FinMile,DT_FixedDrtn,RV_OK,TK_NotStart,A1171,Approval of All basement columns & walls RFT,,384,232,0,0,0,0,0,0,0,0,,,,2010-09-30 16:00,2010-09-30 16:00,,2010-08-04 16:00,2010-08-04 16:00,2010-08-04 16:00,2010-08-04 16:00,2010-08-04 16:00,2010-08-04 16:00,,2010-09-30 16:00,2010-09-30 16:00,,PT_Normal,,,,,0jq0jzmHOUOUNEOXRbp/eg,,,,N,0,0,,,2010-08-28 10:04,2010-09-16 19:14,admin,admin,2010-08-04 16:00,2010-08-04 16:00,0
46,90540,793,11891,841,0,0,N,N,N,CP_Drtn,TT_FinMile,DT_FixedDrtn,RV_OK,TK_NotStart,A1181,Approval of All basement slab concrete dimension,,536,288,0,0,0,0,0,0,0,0,,,,2010-10-30 16:00,2010-10-30 16:00,,2010-08-11 16:00,2010-08-11 16:00,2010-08-11 16:00,2010-08-11 16:00,2010-08-11 16:00,2010-08-11 16:00,,2010-10-30 16:00,2010-10-30 16:00,,PT_Normal,,,,,3fj18hUR006+jRxNDZG7sw,,,,N,0,0,,,2010-08-28 10:04,2010-09-16 19:14,admin,admin,2010-08-11 16:00,2010-08-11 16:00,0
47,90541,793,11891,841,0,0,N,N,N,CP_Drtn,TT_FinMile,DT_FixedDrtn,RV_OK,TK_NotStart,A1191,Approval of All basement slab RFT,,488,240,0,0,0,0,0,0,0,0,,,,2010-10-30 16:00,2010-10-30 16:00,,2010-08-18 16:00,2010-08-18 16:00,2010-08-18 16:00,2010-08-18 16:00,2010-08-18 16:00,2010-08-18 16:00,,2010-10-30 16:00,2010-10-30 16:00,,PT_Normal,,,,,27HtnVanuECnFidtu9qD3g,,,,N,0,0,,,2010-08-28 10:04,2010-09-16 19:14,admin,admin,2010-08-18 16:00,2010-08-18 16:00,0
48,90542,793,11896,841,1,0,N,N,N,CP_Drtn,TT_Task,DT_FixedDUR2,RV_OK,TK_NotStart,A2410,Formwork For R.C raft,2118,8,0,464,0,480,480,464,0,0,0,,,,2010-07-19 08:00,2010-09-25 16:00,,2010-07-18 08:00,2010-09-23 16:00,2010-07-18 08:00,2010-09-23 16:00,2010-07-18 08:00,2010-09-23 16:00,,2010-07-19 08:00,2010-09-25 16:00,,PT_Normal,,,,,Um+ghubRQEOhe0j6pnL3uA,qetCTp0rSLK91WD/Lb1Mkw,,,N,0,0,,,2010-08-28 10:04,2010-09-16 19:14,admin,admin,2010-07-18 08:00,2010-09-23 16:00,464
49,90543,793,11896,841,1,0,N,N,N,CP_Drtn,TT_Task,DT_FixedDUR2,RV_OK,TK_NotStart,A2420,Rebar For R.C raft,2117,8,0,480,0,2800,2800,480,0,0,0,,,,2010-07-20 08:00,2010-09-28 16:00,,2010-07-19 08:00,2010-09-27 16:00,2010-07-19 08:00,2010-09-27 16:00,2010-07-19 08:00,2010-09-27 16:00,,2010-07-20 08:00,2010-09-28 16:00,,PT_Normal,,,,,a+yQr4i2DEe+d+zp0hwgMA,7roFrbcxSn+PJu9WogPbfw,,,N,0,0,,,2010-08-28 10:04,2010-09-18 13:42,admin,admin,2010-07-19 08:00,2010-09-27 16:00,480
50,90544,793,11896,841,1,0,N,N,N,CP_Drtn,TT_Task,DT_FixedDrtn,RV_OK,TK_NotStart,A2440,Pouring For R.C raft (area 3),2120,176,0,8,0,160,160,8,0,0,0,,,,2010-10-20 08:00,2010-10-20 16:00,,2010-09-25 08:00,2010-09-25 16:00,2010-09-25 08:00,2010-09-25 16:00,2010-09-25 08:00,2010-09-25 16:00,,2010-10-20 08:00,2010-10-20 16:00,,PT_Normal,,,,,BN+pY4l45EqmJTSZZvQPGw,Aym3WQk5Qqq4wzZge+5qdw,,,N,0,0,,,2010-08-28 10:04,2010-09-18 12:11,admin,admin,2010-09-25 08:00,2010-09-25 16:00,8
51,90545,793,11897,841,1,0,N,N,N,CP_Drtn,TT_Task,DT_FixedDUR2,RV_OK,TK_NotStart,A2450,Formwork For basement walls & col.,2118,144,0,160,0,2400,2400,160,0,0,0,,,,2010-10-06 08:00,2010-10-28 16:00,,2010-09-15 08:00,2010-10-07 16:00,2010-09-15 08:00,2010-10-07 16:00,2010-09-15 08:00,2010-10-07 16:00,,2010-10-06 08:00,2010-10-28 16:00,,PT_Normal,,,,,12SfR4A30EmFZQT2nrwGnQ,agErBgSIQ0mDuyTjNKs1Cg,,,N,0,0,,,2010-08-28 10:04,2010-09-16 19:14,admin,admin,2010-09-15 08:00,2010-10-07 16:00,160
52,90546,793,11897,841,1,0,N,N,N,CP_Drtn,TT_Task,DT_FixedDUR2,RV_OK,TK_NotStart,A2460,Rebar For  basement walls & col.,2117,152,0,184,0,2400,2400,184,0,0,0,,,,2010-10-02 08:00,2010-10-27 16:00,,2010-09-08 08:00,2010-10-05 16:00,2010-09-08 08:00,2010-10-05 16:00,2010-09-08 08:00,2010-10-05 16:00,,2010-10-02 08:00,2010-10-27 16:00,,PT_Normal,,,,,79f9TeHsjk+pXx5z2WcDYQ,FMB0pPDZRGK2HCmuOFVr6Q,,,N,0,0,,,2010-08-28 10:04,2010-09-16 19:14,admin,admin,2010-09-08 08:00,2010-10-05 16:00,184
53,90547,793,11897,841,1,0,N,N,N,CP_Drtn,TT_Task,DT_FixedDUR2,RV_OK,TK_NotStart,A2470,Pouring For  basement walls & col.(area 1),2120,144,0,8,0,32,32,8,0,0,0,,,,2010-10-13 08:00,2010-10-13 16:00,,2010-09-22 08:00,2010-09-22 16:00,2010-09-22 08:00,2010-09-22 16:00,2010-09-22 08:00,2010-09-22 16:00,,2010-10-13 08:00,2010-10-13 16:00,,PT_Normal,,,,,iLY8e9rLt028NBCY7auekw,H5DvIcyiQCKJmfiChJtriA,,,N,0,0,,,2010-08-28 10:04,2010-09-18 12:12,admin,admin,2010-09-22 08:00,2010-09-22 16:00,8
54,90548,793,11898,841,1,0,N,N,N,CP_Drtn,TT_Task,DT_FixedDUR2,RV_OK,TK_NotStart,A2480,Formwork&Rebar For basement Slab & stairs(area 1),2118,248,0,56,0,800,800,56,0,0,0,,,,2010-10-31 08:00,2010-11-07 16:00,,2010-09-25 08:00,2010-10-02 16:00,2010-09-25 08:00,2010-10-02 16:00,2010-09-25 08:00,2010-10-02 16:00,,2010-10-31 08:00,2010-11-07 16:00,,PT_Normal,,,,,LUMBzfggE0G/tiFMv4zm2A,SGi0tMn6TwOjOFX8ETZGlw,,,N,0,0,,,2010-08-28 10:04,2010-09-18 13:24,admin,admin,2010-09-25 08:00,2010-10-02 16:00,56
55,90551,793,11898,841,1,0,N,N,N,CP_Drtn,TT_Task,DT_FixedDrtn,RV_OK,TK_NotStart,A2510,Pouring For basement Slab & stairs ( Area 3),2120,176,32,8,0,64,64,8,0,0,0,,,,2010-11-08 08:00,2010-11-08 16:00,,2010-10-13 08:00,2010-10-13 16:00,2010-10-13 08:00,2010-10-13 16:00,2010-10-13 08:00,2010-10-13 16:00,,2010-11-08 08:00,2010-11-08 16:00,,PT_Normal,,,,,vJXjw2TrJkeoaHj4TpIvrw,8T+BuoQKRwi+waGA8qGWNA,,,N,0,0,,,2010-08-28 10:04,2010-09-18 12:19,admin,admin,2010-10-13 08:00,2010-10-13 16:00,8
56,90552,793,11899,841,1,0,N,N,N,CP_Drtn,TT_Task,DT_FixedDUR2,RV_OK,TK_NotStart,A2530,Isolation For Foundation bituminous emulsion,2121,264,120,72,0,1280,1280,72,0,0,0,,,,2010-11-01 08:00,2010-11-10 16:00,,2010-09-23 08:00,2010-10-03 16:00,2010-09-23 08:00,2010-10-03 16:00,2010-09-23 08:00,2010-10-03 16:00,,2010-11-01 08:00,2010-11-10 16:00,,PT_Normal,,,,,4ZSznLSvCUmCQqZws/UF+A,Fdq21RC3TAq3tmvlK3EKkQ,,,N,0,0,,,2010-08-28 10:04,2010-09-16 19:14,admin,admin,2010-09-23 08:00,2010-10-03 16:00,72
57,90553,793,11899,841,1,0,N,N,N,CP_Drtn,TT_Task,DT_FixedDUR2,RV_OK,TK_NotStart,A2520,Water proofing bituminous membrane,2121,144,0,120,0,400,400,120,0,0,0,,,,2010-10-18 08:00,2010-11-03 16:00,,2010-09-27 08:00,2010-10-13 16:00,2010-09-27 08:00,2010-10-13 16:00,2010-09-27 08:00,2010-10-13 16:00,,2010-10-18 08:00,2010-11-03 16:00,,PT_Normal,,,,,138/FD/4TE2g+it9jNaUHw,tB3UCDmjRoCtOZ30R+Au0Q,,,N,0,0,,,2010-08-28 10:04,2010-09-16 19:14,admin,admin,2010-09-27 08:00,2010-10-13 16:00,120
58,90554,793,11899,841,1,0,N,N,N,CP_Drtn,TT_Task,DT_FixedDUR2,RV_OK,TK_NotStart,A2540,Water proofing protection layer cartonal,2121,144,0,120,0,1360,1360,120,0,0,0,,,,2010-10-20 08:00,2010-11-06 16:00,,2010-09-29 08:00,2010-10-16 16:00,2010-09-29 08:00,2010-10-16 16:00,2010-09-29 08:00,2010-10-16 16:00,,2010-10-20 08:00,2010-11-06 16:00,,PT_Normal,,,,,Y9rBFinBaU+DxJ9Qn24iLw,e2NKrus5SRKeIVnzyrWvQg,,,N,0,0,,,2010-08-28 10:04,2010-09-16 19:14,admin,admin,2010-09-29 08:00,2010-10-16 16:00,120
59,90555,793,11900,841,1,0,N,N,N,CP_Drtn,TT_Task,DT_FixedDUR2,RV_OK,TK_NotStart,A2550,Formwork For R.C raft,2118,248,0,448,0,480,480,448,0,0,0,,,,2010-09-12 08:00,2010-11-15 16:00,,2010-08-05 08:00,2010-10-10 16:00,2010-08-05 08:00,2010-10-10 16:00,2010-08-05 08:00,2010-10-10 16:00,,2010-09-12 08:00,2010-11-15 16:00,,PT_Normal,,,,,i9+ZkNC9zUSSC3Q0FxAMQA,+j54bVqFOUCb4a5lf5IKjw,,,N,0,0,,,2010-08-28 10:04,2010-09-16 19:14,admin,admin,2010-08-05 08:00,2010-10-10 16:00,448
60,90556,793,11900,841,1,0,N,N,N,CP_Drtn,TT_Task,DT_FixedDUR2,RV_OK,TK_NotStart,A2560,Rebar For R.C raft,2117,248,248,384,0,2800,2800,384,0,0,0,,,,2010-09-21 08:00,2010-11-15 16:00,,2010-08-15 08:00,2010-10-10 16:00,2010-08-15 08:00,2010-10-10 16:00,2010-08-15 08:00,2010-10-10 16:00,,2010-09-21 08:00,2010-11-15 16:00,,PT_Normal,,,,,PvqhBwwwyk6ENhVzyPx2FA,gdIv9b4mNkGwZ9lY6yhesA,,,N,0,0,,,2010-08-28 10:04,2010-09-18 13:47,admin,admin,2010-08-15 08:00,2010-10-10 16:00,384
61,90557,793,11900,841,1,0,N,N,N,CP_Drtn,TT_Task,DT_FixedDrtn,RV_OK,TK_NotStart,A2570,M&E conduits For R.C raft (by others),,8,0,56,0,0,0,56,0,0,0,,,,2010-09-27 08:00,2010-10-04 16:00,,2010-09-26 08:00,2010-10-03 16:00,2010-09-26 08:00,2010-10-03 16:00,2010-09-26 08:00,2010-10-03 16:00,,2010-09-27 08:00,2010-10-04 16:00,,PT_Normal,,,,,QE4mXAx1jUaQCNG8SuUASg,dJEexCTzpUO3LWtffZvT3Q,,,N,0,0,,,2010-08-28 10:04,2010-09-16 19:14,admin,admin,2010-09-26 08:00,2010-10-03 16:00,56
62,90558,793,11900,841,1,0,N,N,N,CP_Drtn,TT_Task,DT_FixedDrtn,RV_OK,TK_NotStart,A2580,Pouring For R.C raft (Area 1),2120,8,0,8,0,56,56,8,0,0,0,,,,2010-10-06 08:00,2010-10-06 16:00,,2010-10-05 08:00,2010-10-05 16:00,2010-10-05 08:00,2010-10-05 16:00,2010-10-05 08:00,2010-10-05 16:00,,2010-10-06 08:00,2010-10-06 16:00,,PT_Normal,,,,,1uiXoXOiL02snowK1wstTw,WXepSmm2YE+E16Q6FY/1ag,,,N,0,0,,,2010-08-28 10:04,2010-09-16 19:14,admin,admin,2010-10-05 08:00,2010-10-05 16:00,8
63,90559,793,11901,841,1,0,N,N,N,CP_Drtn,TT_Task,DT_FixedDUR2,RV_OK,TK_NotStart,A2590,Formwork For basement walls & col.,2118,168,0.0166666666666667,256,0,2400,2400,256,0,0,0,,,,2010-10-10 08:00,2010-11-15 16:00,,2010-09-15 08:00,2010-10-21 16:00,2010-09-15 08:00,2010-10-21 16:00,2010-09-15 08:00,2010-10-21 16:00,,2010-10-10 08:00,2010-11-15 16:00,,PT_Normal,,,,,gm1IGloXLEumZTBJ8riixA,WIYPqZzqhUO+wFyG4mOkUg,,,N,0,0,,,2010-08-28 10:04,2010-09-18 13:26,admin,admin,2010-09-15 08:00,2010-10-21 16:00,256
64,90560,793,11901,841,1,0,N,N,N,CP_Drtn,TT_Task,DT_FixedDUR2,RV_OK,TK_NotStart,A2600,Rebar For  basement walls & col.,2117,191.983333333333,191.983333333333,272,0,2400,2400,272,0,0,0,,,,2010-10-07 08:00,2010-11-15 16:00,,2010-09-08 08:01,2010-10-19 08:01,2010-09-08 08:01,2010-10-19 08:01,2010-09-08 08:01,2010-10-19 08:01,,2010-10-07 08:00,2010-11-15 16:00,,PT_Normal,,,,,0+/COXgMYEGz9CF+aLjBxQ,Nbmx82SYpU2phnPHWoAfZw,,,N,0,0,,,2010-08-28 10:04,2010-09-18 13:26,admin,admin,2010-09-08 08:01,2010-10-19 08:01,272
65,90561,793,11901,841,1,0,N,N,N,CP_Drtn,TT_Task,DT_FixedDUR2,RV_OK,TK_NotStart,A2610,Pouring For  basement walls & col.(Area 1),2120,8,0,8,0,32,32,8,0,0,0,,,,2010-10-14 08:00,2010-10-14 16:00,,2010-10-13 08:00,2010-10-13 16:00,2010-10-13 08:00,2010-10-13 16:00,2010-10-13 08:00,2010-10-13 16:00,,2010-10-14 08:00,2010-10-14 16:00,,PT_Normal,,,,,q3XeP0ZMUEGTFapBp331MQ,cS/Fb1LxqEOhkWxJKV7edg,,,N,0,0,,,2010-08-28 10:04,2010-09-18 12:21,admin,admin,2010-10-13 08:00,2010-10-13 16:00,8
66,90562,793,11902,841,1,0,N,N,N,CP_Drtn,TT_Task,DT_FixedDUR2,RV_OK,TK_NotStart,A2620,Formwork&Rebar For basement Slab & stairs(Area 1),2118,136,0,56,0,800,800,56,0,0,0,,,,2010-11-04 08:00,2010-11-11 16:00,,2010-10-16 08:00,2010-10-23 16:00,2010-10-16 08:00,2010-10-23 16:00,2010-10-16 08:00,2010-10-23 16:00,,2010-11-04 08:00,2010-11-11 16:00,,PT_Normal,,,,,mKi6oW/PzkKeSGlxpYZ5Gg,I1nLGWlQdkORAJpdeumUUQ,,,N,0,0,,,2010-08-28 10:04,2010-09-18 13:25,admin,admin,2010-10-16 08:00,2010-10-23 16:00,56
67,90565,793,11902,841,1,0,N,N,N,CP_Drtn,TT_Task,DT_FixedDrtn,RV_OK,TK_NotStart,A2650,Pouring For basement Slab & stairs (Area 1),2120,136,128,8,0,32,32,8,0,0,0,,,,2010-11-13 08:00,2010-11-13 16:00,,2010-10-24 08:00,2010-10-24 16:00,2010-10-24 08:00,2010-10-24 16:00,2010-10-24 08:00,2010-10-24 16:00,,2010-11-13 08:00,2010-11-13 16:00,,PT_Normal,,,,,EPgENiIF4kujJrXWp+D0ZA,aJKz1v2Byk+8OiZMa2GMYw,,,N,0,0,,,2010-08-28 10:04,2010-09-16 19:14,admin,admin,2010-10-24 08:00,2010-10-24 16:00,8
68,90566,793,11903,841,1,0,N,N,N,CP_Drtn,TT_Task,DT_FixedDUR2,RV_OK,TK_NotStart,A2660,Isolation For Foundation bituminous emulsion,2121,48,40,48,0,1280,1280,48,0,0,0,,,,2010-10-17 08:00,2010-10-23 16:00,,2010-10-10 08:00,2010-10-16 16:00,2010-10-10 08:00,2010-10-16 16:00,2010-10-10 08:00,2010-10-16 16:00,,2010-10-17 08:00,2010-10-23 16:00,,PT_Normal,,,,,5ITG4YF/IEqkJpZEMw0Zww,DzVR0fDmR0ylpLSyL05ZfQ,,,N,0,0,,,2010-08-28 10:04,2010-09-16 19:14,admin,admin,2010-10-10 08:00,2010-10-16 16:00,48
69,90567,793,11903,841,1,0,N,N,N,CP_Drtn,TT_Task,DT_FixedDUR2,RV_OK,TK_NotStart,A2670,Water proofing bituminous membrane,2121,8,0,112,0,400,400,112,0,0,0,,,,2010-10-19 08:00,2010-11-03 16:00,,2010-10-18 08:00,2010-11-02 16:00,2010-10-18 08:00,2010-11-02 16:00,2010-10-18 08:00,2010-11-02 16:00,,2010-10-19 08:00,2010-11-03 16:00,,PT_Normal,,,,,3ss2mJa4PkKQmhMWZ7NFbQ,IY78leh5hkuzkucwdyhBxw,,,N,0,0,,,2010-08-28 10:04,2010-09-16 19:14,admin,admin,2010-10-18 08:00,2010-11-02 16:00,112
70,90568,793,11903,841,1,0,N,N,N,CP_Drtn,TT_Task,DT_FixedDUR2,RV_OK,TK_NotStart,A2680,Water proofing protection layer cartonal,2121,8,0,112,0,1360,1360,112,0,0,0,,,,2010-10-21 08:00,2010-11-06 16:00,,2010-10-20 08:00,2010-11-04 16:00,2010-10-20 08:00,2010-11-04 16:00,2010-10-20 08:00,2010-11-04 16:00,,2010-10-21 08:00,2010-11-06 16:00,,PT_Normal,,,,,ifO9eIj2UEK8rgSDTZHheQ,4nBYl5jF30eLB7hFVwtV3g,,,N,0,0,,,2010-08-28 10:04,2010-09-16 19:14,admin,admin,2010-10-20 08:00,2010-11-04 16:00,112
71,90570,793,11896,841,1,0,N,N,N,CP_Drtn,TT_Task,DT_FixedDrtn,RV_OK,TK_NotStart,A2700,M&E conduits For R.C raft (by others),,8,0,56,0,0,0,56,0,0,0,,,,2010-09-19 08:00,2010-09-26 16:00,,2010-09-18 08:00,2010-09-25 16:00,2010-09-18 08:00,2010-09-25 16:00,2010-09-18 08:00,2010-09-25 16:00,,2010-09-19 08:00,2010-09-26 16:00,,PT_Normal,,,,,xGy1/+MwCUSfVRnRc4fVGA,dJEexCTzpUO3LWtffZvT3Q,,,N,0,0,,,2010-08-28 10:04,2010-09-16 19:14,admin,admin,2010-09-18 08:00,2010-09-25 16:00,56
72,90578,793,11896,841,1,0,N,N,N,CP_Drtn,TT_Task,DT_FixedDrtn,RV_OK,TK_NotStart,A2780,Pouring For R.C raft (area 1),2120,0,0,8,0,56,56,8,0,0,0,2010-09-05 08:00,,,2010-09-05 08:00,2010-09-05 16:00,,2010-09-05 08:00,2010-09-05 16:00,2010-09-05 08:00,2010-09-05 16:00,2010-09-05 08:00,2010-09-05 16:00,,2010-09-05 08:00,2010-09-05 16:00,CS_MSO,PT_Normal,,,,,5/i6zZhUQ0yIOvUBqt271A,BN+pY4l45EqmJTSZZvQPGw,,,N,0,0,,,2010-08-28 10:14,2010-09-18 12:11,admin,admin,2010-09-05 08:00,2010-09-05 16:00,8
73,90579,793,11896,841,1,0,N,N,N,CP_Drtn,TT_Task,DT_FixedDrtn,RV_OK,TK_NotStart,A2790,Pouring For R.C raft (area 2),2120,0,456,8,0,56,56,8,0,0,0,2010-09-08 08:00,,,2010-09-08 08:00,2010-09-08 16:00,,2010-09-08 08:00,2010-09-08 16:00,2010-09-08 08:00,2010-09-08 16:00,2010-09-08 08:00,2010-09-08 16:00,,2010-09-08 08:00,2010-09-08 16:00,CS_MSO,PT_Normal,,,,,oTwjdtOGO0mZX9miaagUdg,BN+pY4l45EqmJTSZZvQPGw,,,N,0,0,,,2010-08-28 10:15,2010-09-16 19:14,admin,admin,2010-09-08 08:00,2010-09-08 16:00,8
74,90581,793,11898,841,1,0,N,N,N,CP_Drtn,TT_Task,DT_FixedDrtn,RV_OK,TK_NotStart,A2800,Pouring For basement Slab & stairs (Area 1),2120,248,104,8,0,32,32,8,0,0,0,,,,2010-11-08 08:00,2010-11-08 16:00,,2010-10-03 08:00,2010-10-03 16:00,2010-10-03 08:00,2010-10-03 16:00,2010-10-03 08:00,2010-10-03 16:00,,2010-11-08 08:00,2010-11-08 16:00,,PT_Normal,,,,,LD89X2yxTkuawQFRKQCwzA,vJXjw2TrJkeoaHj4TpIvrw,,,N,0,0,,,2010-08-28 10:31,2010-09-16 19:14,admin,admin,2010-10-03 08:00,2010-10-03 16:00,8
75,90582,793,11898,841,1,0,N,N,N,CP_Drtn,TT_Task,DT_FixedDrtn,RV_OK,TK_NotStart,A2810,Pouring For basement Slab & stairs (Area 2),2120,208,64,8,0,32,32,8,0,0,0,,,,2010-11-08 08:00,2010-11-08 16:00,,2010-10-09 08:00,2010-10-09 16:00,2010-10-09 08:00,2010-10-09 16:00,2010-10-09 08:00,2010-10-09 16:00,,2010-11-08 08:00,2010-11-08 16:00,,PT_Normal,,,,,fTAInHG/o06AH1LrO7FYFA,vJXjw2TrJkeoaHj4TpIvrw,,,N,0,0,,,2010-08-28 10:31,2010-09-18 12:19,admin,admin,2010-10-09 08:00,2010-10-09 16:00,8
76,90583,793,11900,841,1,0,N,N,N,CP_Drtn,TT_Task,DT_FixedDrtn,RV_OK,TK_NotStart,A2820,Pouring For R.C raft (Area 2),2120,24,0,8,0,56,56,8,0,0,0,,,,2010-10-11 08:00,2010-10-11 16:00,,2010-10-07 08:00,2010-10-07 16:00,2010-10-07 08:00,2010-10-07 16:00,2010-10-07 08:00,2010-10-07 16:00,,2010-10-11 08:00,2010-10-11 16:00,,PT_Normal,,,,,jjbdQOO8EE+BYch5cKvscw,1uiXoXOiL02snowK1wstTw,,,N,0,0,,,2010-08-28 10:53,2010-09-18 12:21,admin,admin,2010-10-07 08:00,2010-10-07 16:00,8
77,90584,793,11900,841,1,0,N,N,N,CP_Drtn,TT_Task,DT_FixedDrtn,RV_OK,TK_NotStart,A2830,Pouring For R.C raft (Area 3),2120,24,0,8,0,160,160,8,0,0,0,,,,2010-10-13 08:00,2010-10-13 16:00,,2010-10-10 08:00,2010-10-10 16:00,2010-10-10 08:00,2010-10-10 16:00,2010-10-10 08:00,2010-10-10 16:00,,2010-10-13 08:00,2010-10-13 16:00,,PT_Normal,,,,,GlHtor5W/0yFtjSIjy8dMg,1uiXoXOiL02snowK1wstTw,,,N,0,0,,,2010-08-28 10:53,2010-09-18 12:21,admin,admin,2010-10-10 08:00,2010-10-10 16:00,8
78,90585,793,11902,841,1,0,N,N,N,CP_Drtn,TT_Task,DT_FixedDrtn,RV_OK,TK_NotStart,A2840,Pouring For basement Slab & stairs (Area 2),2120,104,96,8,0,32,32,8,0,0,0,,,,2010-11-13 08:00,2010-11-13 16:00,,2010-10-28 08:00,2010-10-28 16:00,2010-10-28 08:00,2010-10-28 16:00,2010-10-28 08:00,2010-10-28 16:00,,2010-11-13 08:00,2010-11-13 16:00,,PT_Normal,,,,,RmfoYDP6x0u0Zvipv12M0w,EPgENiIF4kujJrXWp+D0ZA,,,N,0,0,,,2010-08-28 11:10,2010-09-18 12:23,admin,admin,2010-10-28 08:00,2010-10-28 16:00,8
79,90586,793,11902,841,1,0,N,N,N,CP_Drtn,TT_Task,DT_FixedDrtn,RV_OK,TK_NotStart,A2850,Pouring For basement Slab & stairs (Area 3),2120,72,64,8,0,64,64,8,0,0,0,,,,2010-11-13 08:00,2010-11-13 16:00,,2010-11-02 08:00,2010-11-02 16:00,2010-11-02 08:00,2010-11-02 16:00,2010-11-02 08:00,2010-11-02 16:00,,2010-11-13 08:00,2010-11-13 16:00,,PT_Normal,,,,,O8mYEGpJN0yv5Ka6Q2dWNQ,EPgENiIF4kujJrXWp+D0ZA,,,N,0,0,,,2010-08-28 11:10,2010-09-18 12:23,admin,admin,2010-11-04 08:00,2010-11-04 16:00,8
80,90587,793,11885,841,1,0,N,N,N,CP_Drtn,TT_Task,DT_FixedDUR2,RV_OK,TK_NotStart,A2180,Testing & Handingover,,0,0,32,0,0,0,32,0,0,0,,,,2010-11-11 08:00,2010-11-15 16:00,,2010-11-11 08:00,2010-11-15 16:00,2010-11-11 08:00,2010-11-15 16:00,2010-11-11 08:00,2010-11-15 16:00,,2010-11-11 08:00,2010-11-15 16:00,,PT_Normal,,,,,SymQcnw6tkK1zcSe+tNdsQ,,,,Y,0,0,,,2010-08-28 12:25,2010-09-18 13:26,admin,admin,2010-11-11 08:00,2010-11-15 16:00,32
81,90726,793,11896,841,1,0,N,N,N,CP_Drtn,TT_Task,DT_FixedDrtn,RV_OK,TK_NotStart,A2860,Pouring For R.C raft (area 4),2120,328,328,8,0,160,160,8,0,0,0,,,,2010-11-15 08:00,2010-11-15 16:00,,2010-09-28 08:00,2010-09-28 16:00,2010-09-28 08:00,2010-09-28 16:00,2010-09-28 08:00,2010-09-28 16:00,,2010-11-15 08:00,2010-11-15 16:00,,PT_Normal,,,,,ibjvg6ltrUeJ0Jxj9QnGQQ,BN+pY4l45EqmJTSZZvQPGw,,,N,0,0,,,2010-09-16 15:47,2010-09-18 12:12,admin,admin,2010-09-28 08:00,2010-09-28 16:00,8
82,90727,793,11897,841,1,0,N,N,N,CP_Drtn,TT_Task,DT_FixedDUR2,RV_OK,TK_NotStart,A2870,Pouring For  basement walls & col.(area 2),2120,208,0,8,0,32,32,8,0,0,0,,,,2010-10-28 08:00,2010-10-28 16:00,,2010-09-28 08:00,2010-09-28 16:00,2010-09-28 08:00,2010-09-28 16:00,2010-09-28 08:00,2010-09-28 16:00,,2010-10-28 08:00,2010-10-28 16:00,,PT_Normal,,,,,PQMoHp1p6E+a35HekCpD5A,iLY8e9rLt028NBCY7auekw,,,N,0,0,,,2010-09-16 16:06,2010-09-18 12:12,admin,admin,2010-09-28 08:00,2010-09-28 16:00,8
83,90728,793,11897,841,1,0,N,N,N,CP_Drtn,TT_Task,DT_FixedDUR2,RV_OK,TK_NotStart,A2880,Pouring For  basement walls & col.(area 3),2120,176,0,8,0,64,64,8,0,0,0,,,,2010-10-28 08:00,2010-10-28 16:00,,2010-10-03 08:00,2010-10-03 16:00,2010-10-03 08:00,2010-10-03 16:00,2010-10-03 08:00,2010-10-03 16:00,,2010-10-28 08:00,2010-10-28 16:00,,PT_Normal,,,,,zMBiOOAsNU2YRFed1zIvhQ,iLY8e9rLt028NBCY7auekw,,,N,0,0,,,2010-09-16 16:06,2010-09-18 12:12,admin,admin,2010-10-03 08:00,2010-10-03 16:00,8
84,90729,793,11897,841,1,0,N,N,N,CP_Drtn,TT_Task,DT_FixedDUR2,RV_OK,TK_NotStart,A2890,Pouring For  basement walls & col.(area 4),2120,144,0,8,0,64,64,8,0,0,0,,,,2010-10-30 08:00,2010-10-30 16:00,,2010-10-09 08:00,2010-10-09 16:00,2010-10-09 08:00,2010-10-09 16:00,2010-10-09 08:00,2010-10-09 16:00,,2010-10-30 08:00,2010-10-30 16:00,,PT_Normal,,,,,i3hTVsiIk0uv20yl+bP8vg,iLY8e9rLt028NBCY7auekw,,,N,0,0,,,2010-09-16 16:06,2010-09-18 12:12,admin,admin,2010-10-09 08:00,2010-10-09 16:00,8
85,90730,793,11898,841,1,0,N,N,N,CP_Drtn,TT_Task,DT_FixedDUR2,RV_OK,TK_NotStart,A2900,Formwork&Rebar For basement Slab & stairs(area 2),2118,208,0,56,0,800,800,56,0,0,0,,,,2010-10-31 08:00,2010-11-07 16:00,,2010-09-30 08:00,2010-10-07 16:00,2010-09-30 08:00,2010-10-07 16:00,2010-09-30 08:00,2010-10-07 16:00,,2010-10-31 08:00,2010-11-07 16:00,,PT_Normal,,,,,n5WFSEOmykCsEoOalAHC+w,LUMBzfggE0G/tiFMv4zm2A,,,N,0,0,,,2010-09-16 16:48,2010-09-18 13:25,admin,admin,2010-09-30 08:00,2010-10-07 16:00,56
86,90731,793,11898,841,1,0,N,N,N,CP_Drtn,TT_Task,DT_FixedDUR2,RV_OK,TK_NotStart,A2910,Formwork&Rebar For basement Slab & stairs(area 3),2118,176,0,56,0,3200,3200,56,0,0,0,,,,2010-10-31 08:00,2010-11-07 16:00,,2010-10-05 08:00,2010-10-12 16:00,2010-10-05 08:00,2010-10-12 16:00,2010-10-05 08:00,2010-10-12 16:00,,2010-10-31 08:00,2010-11-07 16:00,,PT_Normal,,,,,q2EJKQN1pket4dXRLL0LWw,LUMBzfggE0G/tiFMv4zm2A,,,N,0,0,,,2010-09-16 16:48,2010-09-18 13:25,admin,admin,2010-10-05 08:00,2010-10-12 16:00,56
87,90732,793,11898,841,1,0,N,N,N,CP_Drtn,TT_Task,DT_FixedDUR2,RV_OK,TK_NotStart,A2920,Formwork&Rebar For basement Slab & stairs(area 4),2118,144,0,56,0,3200,3200,56,0,0,0,,,,2010-10-31 08:00,2010-11-07 16:00,,2010-10-10 08:00,2010-10-17 16:00,2010-10-10 08:00,2010-10-17 16:00,2010-10-10 08:00,2010-10-17 16:00,,2010-10-31 08:00,2010-11-07 16:00,,PT_Normal,,,,,GLNBOmq8oEC8WIWTqx7Nag,LUMBzfggE0G/tiFMv4zm2A,,,N,0,0,,,2010-09-16 16:48,2010-09-18 13:25,admin,admin,2010-10-10 08:00,2010-10-17 16:00,56
88,90733,793,11898,841,1,0,N,N,N,CP_Drtn,TT_Task,DT_FixedDrtn,RV_OK,TK_NotStart,A2930,Pouring For basement Slab & stairs ( Area 4),2120,144,0,8,0,64,64,8,0,0,0,,,,2010-11-08 08:00,2010-11-08 16:00,,2010-10-18 08:00,2010-10-18 16:00,2010-10-18 08:00,2010-10-18 16:00,2010-10-18 08:00,2010-10-18 16:00,,2010-11-08 08:00,2010-11-08 16:00,,PT_Normal,,,,,z339ndXaHEOoBUpoLvIeZw,vJXjw2TrJkeoaHj4TpIvrw,,,N,0,0,,,2010-09-16 16:48,2010-09-18 12:20,admin,admin,2010-10-18 08:00,2010-10-18 16:00,8
89,90735,793,11900,841,1,0,N,N,N,CP_Drtn,TT_Task,DT_FixedDrtn,RV_OK,TK_NotStart,A2940,Pouring For R.C raft (Area 4),2120,24,0,8,0,160,160,8,0,0,0,,,,2010-10-16 08:00,2010-10-16 16:00,,2010-10-12 08:00,2010-10-12 16:00,2010-10-12 08:00,2010-10-12 16:00,2010-10-12 08:00,2010-10-12 16:00,,2010-10-16 08:00,2010-10-16 16:00,,PT_Normal,,,,,MbE/5rf+VECAvt6laA3tuw,GlHtor5W/0yFtjSIjy8dMg,,,N,0,0,,,2010-09-16 17:44,2010-09-18 12:21,admin,admin,2010-10-12 08:00,2010-10-12 16:00,8
90,90736,793,11901,841,1,0,N,N,N,CP_Drtn,TT_Task,DT_FixedDUR2,RV_OK,TK_NotStart,A2950,Pouring For  basement walls & col.(Area 2),2120,104,0,8,0,32,32,8,0,0,0,,,,2010-11-02 08:00,2010-11-02 16:00,,2010-10-18 08:00,2010-10-18 16:00,2010-10-18 08:00,2010-10-18 16:00,2010-10-18 08:00,2010-10-18 16:00,,2010-11-02 08:00,2010-11-02 16:00,,PT_Normal,,,,,J9ALHvx+qE2kpzSR6Ou3iw,q3XeP0ZMUEGTFapBp331MQ,,,N,0,0,,,2010-09-16 17:53,2010-09-18 12:21,admin,admin,2010-10-18 08:00,2010-10-18 16:00,8
91,90737,793,11901,841,1,0,N,N,N,CP_Drtn,TT_Task,DT_FixedDUR2,RV_OK,TK_NotStart,A2960,Pouring For  basement walls & col.(Area 3),2120,72,0,8,0,64,64,8,0,0,0,,,,2010-11-02 08:00,2010-11-02 16:00,,2010-10-23 08:00,2010-10-23 16:00,2010-10-23 08:00,2010-10-23 16:00,2010-10-23 08:00,2010-10-23 16:00,,2010-11-02 08:00,2010-11-02 16:00,,PT_Normal,,,,,T4LrgDUSu0SvU5hWjAhz0A,q3XeP0ZMUEGTFapBp331MQ,,,N,0,0,,,2010-09-16 17:53,2010-09-18 12:21,admin,admin,2010-10-23 08:00,2010-10-23 16:00,8
92,90738,793,11901,841,1,0,N,N,N,CP_Drtn,TT_Task,DT_FixedDUR2,RV_OK,TK_NotStart,A2970,Pouring For  basement walls & col.(Area 4),2120,24,0,8,0,64,64,8,0,0,0,,,,2010-11-01 08:00,2010-11-01 16:00,,2010-10-28 08:00,2010-10-28 16:00,2010-10-28 08:00,2010-10-28 16:00,2010-10-28 08:00,2010-10-28 16:00,,2010-11-01 08:00,2010-11-01 16:00,,PT_Normal,,,,,21xL1AkkUkKUUUoRecRRqw,q3XeP0ZMUEGTFapBp331MQ,,,N,0,0,,,2010-09-16 17:53,2010-09-18 12:21,admin,admin,2010-10-28 08:00,2010-10-28 16:00,8
93,90739,793,11902,841,1,0,N,N,N,CP_Drtn,TT_Task,DT_FixedDrtn,RV_OK,TK_NotStart,A2980,Pouring For basement Slab & stairs (Area 4),2120,24,16,8,0,64,64,8,0,0,0,,,,2010-11-13 08:00,2010-11-13 16:00,,2010-11-09 08:00,2010-11-09 16:00,2010-11-09 08:00,2010-11-09 16:00,2010-11-09 08:00,2010-11-09 16:00,,2010-11-13 08:00,2010-11-13 16:00,,PT_Normal,,,,,FXG+jDCudkSbvC7EkfUrmQ,O8mYEGpJN0yv5Ka6Q2dWNQ,,,N,0,0,,,2010-09-16 18:18,2010-09-18 12:24,admin,admin,2010-11-09 08:00,2010-11-09 16:00,8
94,90740,793,11902,841,1,0,N,N,N,CP_Drtn,TT_Task,DT_FixedDUR2,RV_OK,TK_NotStart,A2990,Formwork&Rebar For basement Slab & stairs(Area 2),2118,104,0,56,0,800,800,56,0,0,0,,,,2010-11-04 08:00,2010-11-11 16:00,,2010-10-20 08:00,2010-10-27 16:00,2010-10-20 08:00,2010-10-27 16:00,2010-10-20 08:00,2010-10-27 16:00,,2010-11-04 08:00,2010-11-11 16:00,,PT_Normal,,,,,xqd9hJQdRUioLYrYOclsmA,mKi6oW/PzkKeSGlxpYZ5Gg,,,N,0,0,,,2010-09-16 18:20,2010-09-18 13:26,admin,admin,2010-10-20 08:00,2010-10-27 16:00,56
95,90741,793,11902,841,1,0,N,N,N,CP_Drtn,TT_Task,DT_FixedDUR2,RV_OK,TK_NotStart,A3000,Formwork&Rebar For basement Slab & stairs(Area 3),2118,72,0,56,0,3200,3200,56,0,0,0,,,,2010-11-04 08:00,2010-11-11 16:00,,2010-10-25 08:00,2010-11-01 16:00,2010-10-25 08:00,2010-11-01 16:00,2010-10-25 08:00,2010-11-01 16:00,,2010-11-04 08:00,2010-11-11 16:00,,PT_Normal,,,,,THE361yC3E6siDNOhCQC7A,mKi6oW/PzkKeSGlxpYZ5Gg,,,N,0,0,,,2010-09-16 18:20,2010-09-18 13:26,admin,admin,2010-10-27 08:00,2010-11-03 16:00,56
96,90742,793,11902,841,1,0,N,N,N,CP_Drtn,TT_Task,DT_FixedDUR2,RV_OK,TK_NotStart,A3010,Formwork&Rebar For basement Slab & stairs(Area 4),2118,24,0,56,0,3200,3200,56,0,0,0,,,,2010-11-04 08:00,2010-11-11 16:00,,2010-11-01 08:00,2010-11-08 16:00,2010-11-01 08:00,2010-11-08 16:00,2010-11-01 08:00,2010-11-08 16:00,,2010-11-04 08:00,2010-11-11 16:00,,PT_Normal,,,,,P9064rbW10eAuIluOjDOiA,mKi6oW/PzkKeSGlxpYZ5Gg,,,N,0,0,,,2010-09-16 18:20,2010-09-18 13:26,admin,admin,2010-11-01 08:00,2010-11-08 16:00,56
