,task_id,proj_id,wbs_id,clndr_id,phys_complete_pct,rev_fdbk_flag,lock_plan_flag,auto_compute_act_flag,complete_pct_type,task_type,duration_type,status_code,task_code,task_name,rsrc_id,total_float_hr_cnt,free_float_hr_cnt,remain_drtn_hr_cnt,act_work_qty,remain_work_qty,target_work_qty,target_drtn_hr_cnt,target_equip_qty,act_equip_qty,remain_equip_qty,cstr_date,act_start_date,act_end_date,late_start_date,late_end_date,expect_end_date,early_start_date,early_end_date,restart_date,reend_date,target_start_date,target_end_date,rem_late_start_date,rem_late_end_date,cstr_type,priority_type,suspend_date,resume_date,float_path,float_path_order,guid,tmpl_guid,cstr_date2,cstr_type2,driving_path_flag,act_this_per_work_qty,act_this_per_equip_qty,external_early_start_date,external_late_end_date,create_date,update_date,create_user,update_user,location_id
0,139743,1749,36056,642,0,N,N,N,CP_Drtn,TT_Task,DT_FixedDUR2,TK_NotStart,BL2-MEP-EL-GF-3000,Lights Fitting Fixing,,1112,128,112,0,244,244,112,7336.659378,0,7336.659378,,,,2015-09-30 08:00,2015-10-13 16:00,,2015-05-11 08:00,2015-05-26 16:00,2015-05-11 08:00,2015-05-26 16:00,2015-05-11 08:00,2015-05-26 16:00,2015-09-30 08:00,2015-10-13 16:00,,PT_Normal,,,,,zzbE1zK1ykOwc3bjR2ymuw,//EC1zhfdEy2l7gtlABeMA,,,N,0,0,,,2014-04-05 12:27,2014-04-05 13:21,admin,admin,
1,139744,1749,36056,642,0,N,N,N,CP_Drtn,TT_Task,DT_FixedDUR2,TK_NotStart,BL2-MEP-EL-GF-3050,Sockets and Switches Fixing,,1592,176,64,0,128,128,64,1174.957134,0,1174.957134,,,,2015-11-29 08:00,2015-12-06 16:00,,2015-05-11 08:00,2015-05-19 16:00,2015-05-11 08:00,2015-05-19 16:00,2015-05-11 08:00,2015-05-19 16:00,2015-11-29 08:00,2015-12-06 16:00,,PT_Normal,,,,,DQmR/QhVuk2GF0gjnxgbGQ,022xyUN3DUOkMuCQ/SrGZw,,,N,0,0,,,2014-04-05 12:27,2014-04-05 13:21,admin,admin,
2,139745,1749,36056,642,0,N,N,N,CP_Drtn,TT_Task,DT_FixedDUR2,TK_NotStart,BL2-MEP-EL-GF-3010,Emergency Light Fixing,,1648,176,64,0,128,128,64,5722.024623,0,5722.024623,,,,2015-12-06 08:00,2015-12-13 16:00,,2015-05-11 08:00,2015-05-19 16:00,2015-05-11 08:00,2015-05-19 16:00,2015-05-11 08:00,2015-05-19 16:00,2015-12-06 08:00,2015-12-13 16:00,,PT_Normal,,,,,gefLRCgQhEig/FgikkBaPQ,wzsdPiCUIkyj1JvGMpcRjA,,,N,0,0,,,2014-04-05 12:27,2014-04-05 13:21,admin,admin,
3,139746,1749,36056,642,0,N,N,N,CP_Drtn,TT_Task,DT_FixedDUR2,TK_NotStart,BL2-MEP-EL-GF-3020,Fire Alarm System Detector Installation,,1272,144,96,0,192,192,96,4046.378277,0,4046.378277,,,,2015-10-20 08:00,2015-10-31 16:00,,2015-05-11 08:00,2015-05-24 16:00,2015-05-11 08:00,2015-05-24 16:00,2015-05-11 08:00,2015-05-24 16:00,2015-10-20 08:00,2015-10-31 16:00,,PT_Normal,,,,,DeGdELTmwkCUUgkniuuxrA,rrBJAexjzUi0vpXMhQUPFA,,,N,0,0,,,2014-04-05 12:27,2014-04-05 13:21,admin,admin,
4,139747,1749,36056,642,0,N,N,N,CP_Drtn,TT_Task,DT_FixedDUR2,TK_NotStart,BL2-MEP-EL-GF-3070,SMDB's  Termination and Final Connection,,1688,192,48,0,192,192,48,2791.825001,0,2791.825001,,,,2015-12-11 08:00,2015-12-16 16:00,,2015-05-11 08:00,2015-05-17 16:00,2015-05-11 08:00,2015-05-17 16:00,2015-05-11 08:00,2015-05-17 16:00,2015-12-11 08:00,2015-12-16 16:00,,PT_Normal,,,,,uMa3PtUXCESwbk46EsI/Ng,OSoqy+1jOEyXOjeoEDsiqw,,,N,0,0,,,2014-04-05 12:27,2014-04-05 13:21,admin,admin,
5,139748,1749,36086,642,0,N,N,N,CP_Drtn,TT_Task,DT_FixedDUR2,TK_NotStart,BL2-MEP-EL-GF-3060,Power Cable Puling,,1344,184,112,0,168,168,112,6375.759893,0,6375.759893,,,,2015-09-16 08:00,2015-09-29 16:00,,2015-03-22 08:00,2015-04-06 16:00,2015-03-22 08:00,2015-04-06 16:00,2015-03-22 08:00,2015-04-06 16:00,2015-09-16 08:00,2015-09-29 16:00,,PT_Normal,,,,,nD26eX+QCkWmc0OULNHhdg,Ih7scccOSEO289tVc0ikgw,,,N,0,0,,,2014-04-05 12:27,2014-04-05 13:21,admin,admin,
6,139749,1749,36056,642,0,N,N,N,CP_Drtn,TT_Task,DT_FixedDUR2,TK_NotStart,BL2-MEP-EL-GF-3030,Despature for Low Current  System Installation,4455,1904,0,112,0,336,336,112,72752.164276,0,72752.164276,,,,2016-01-07 08:00,2016-01-20 16:00,,2015-05-11 08:00,2015-05-26 16:00,2015-05-11 08:00,2015-05-26 16:00,2015-05-11 08:00,2015-05-26 16:00,2016-01-07 08:00,2016-01-20 16:00,,PT_Normal,,,,,Gw9rX/Am10eKkCFRAMMz+A,0PqA5Jl+L0meUGxZU0bN7w,,,N,0,0,,,2014-04-05 12:27,2014-04-05 13:21,admin,admin,
7,139750,1749,36056,642,0,N,N,N,CP_Drtn,TT_Task,DT_FixedDUR2,TK_NotStart,BL2-MEP-EL-GF-3040,Low Current  System Outlet installation and Connection,4455,1904,832,80,0,80,80,80,3870.787498,0,3870.787498,,,,2016-01-21 08:00,2016-01-30 16:00,,2015-05-27 08:00,2015-06-06 16:00,2015-05-27 08:00,2015-06-06 16:00,2015-05-27 08:00,2015-06-06 16:00,2016-01-21 08:00,2016-01-30 16:00,,PT_Normal,,,,,cx75MF4x1kKaH/u+rfuvGg,fh9SNXVJn0agHeF9FMTxsg,,,N,0,0,,,2014-04-05 12:27,2014-04-05 13:21,admin,admin,
8,139751,1749,36067,642,0,N,N,N,CP_Drtn,TT_Task,DT_FixedDUR2,TK_NotStart,BL2-MEP-EL-GF-1000,PVC Back Boxes and Conduits  Fixing in Wall,,472,0,176,0,384,384,176,3329.67233,0,3329.67233,,,,2015-03-11 08:00,2015-04-05 16:00,,2014-12-30 08:00,2015-01-26 16:00,2014-12-30 08:00,2015-01-26 16:00,2014-12-30 08:00,2015-01-26 16:00,2015-03-11 08:00,2015-04-05 16:00,,PT_Normal,,,,,m1TwQjwlBE2kbUDzduisRw,XCiLsVRkyUOPLqVSf84dvw,,,N,0,0,,,2014-04-05 12:27,2014-04-05 13:21,admin,admin,
9,139752,1749,36067,642,0,N,N,N,CP_Drtn,TT_Task,DT_FixedDUR2,TK_NotStart,BL2-MEP-EL-GF-1010,DB's Inclosure Fixing,4455,536,56,48,0,96,96,48,2136.399392,0,2136.399392,,,,2015-03-31 08:00,2015-04-06 16:00,,2015-01-12 08:00,2015-01-18 16:00,2015-01-12 08:00,2015-01-18 16:00,2015-01-12 08:00,2015-01-18 16:00,2015-03-31 08:00,2015-04-06 16:00,,PT_Normal,,,,,NuZ1VnE7x0O24EdI7TfhlA,gJczYK1CO0uTWRqB9IWUBw,,,N,0,0,,,2014-04-05 12:27,2014-04-05 13:21,admin,admin,
10,139753,1749,36086,642,0,N,N,N,CP_Drtn,TT_Task,DT_FixedDUR2,TK_NotStart,BL2-MEP-EL-GF-2020,SMDB's  Installation,,2016,184,48,0,45,45,48,4202.598932,0,4202.598932,,,,2015-12-05 08:00,2015-12-10 16:00,,2015-03-17 08:00,2015-03-23 16:00,2015-03-17 08:00,2015-03-23 16:00,2015-03-17 08:00,2015-03-23 16:00,2015-12-05 08:00,2015-12-10 16:00,,PT_Normal,,,,,wxXmRmbInka6bntx572f4Q,S7wH4C+W4UShR1JhPg8PAw,,,N,0,0,,,2014-04-05 12:27,2014-04-05 13:21,admin,admin,
11,139754,1749,36086,642,0,N,N,N,CP_Drtn,TT_Task,DT_FixedDUR2,TK_NotStart,BL2-MEP-EL-GF-2030,Lighting  Wiring,,1056,120,96,0,241.713,241.713,96,3578.08423,0,3578.08423,,,,2015-07-15 08:00,2015-07-26 16:00,,2015-02-18 08:00,2015-03-03 16:00,2015-02-18 08:00,2015-03-03 16:00,2015-02-18 08:00,2015-03-03 16:00,2015-07-15 08:00,2015-07-26 16:00,,PT_Normal,,,,,Y+498YfJrEulvosFw3eg9A,BuIBgnwtG0aJ5HJgtLrykA,,,N,0,0,,,2014-04-05 12:27,2014-04-05 13:21,admin,admin,
12,139755,1749,36086,642,0,N,N,N,CP_Drtn,TT_Task,DT_FixedDUR2,TK_NotStart,BL2-MEP-EL-GF-2040,Power Points Wiring,,1056,120,96,0,192,192,96,2906.213289,0,2906.213289,,,,2015-07-15 08:00,2015-07-26 16:00,,2015-02-18 08:00,2015-03-03 16:00,2015-02-18 08:00,2015-03-03 16:00,2015-02-18 08:00,2015-03-03 16:00,2015-07-15 08:00,2015-07-26 16:00,,PT_Normal,,,,,TmqBzQIC4UeR3Rn/x3UUnA,H12pyAab+02PHpMJc/MLLA,,,N,0,0,,,2014-04-05 12:27,2014-04-05 13:21,admin,admin,
13,139756,1749,36086,642,0,N,N,N,CP_Drtn,TT_Task,DT_FixedDUR2,TK_NotStart,BL2-MEP-EL-GF-2000,Cable Tray and Trunking Installation,,1040,104,112,0,336,336,112,9078.448617,0,9078.448617,,,,2015-07-13 08:00,2015-07-26 16:00,,2015-02-18 08:00,2015-03-05 16:00,2015-02-18 08:00,2015-03-05 16:00,2015-02-18 08:00,2015-03-05 16:00,2015-07-13 08:00,2015-07-26 16:00,,PT_Normal,,,,,vlZ2ggFZzEerJchVfyuwvQ,x8M1Z9Iix0Gvvv0LAzS+cA,,,N,0,0,,,2014-04-05 12:27,2014-04-05 13:21,admin,admin,
14,139757,1749,36086,642,0,N,N,N,CP_Drtn,TT_Task,DT_FixedDUR2,TK_NotStart,BL2-MEP-EL-GF-2060,Emergency Light Wiring,,1088,232,64,0,128,128,64,1210.028798,0,1210.028798,,,,2015-07-19 08:00,2015-07-26 16:00,,2015-02-18 08:00,2015-02-26 16:00,2015-02-18 08:00,2015-02-26 16:00,2015-02-18 08:00,2015-02-26 16:00,2015-07-19 08:00,2015-07-26 16:00,,PT_Normal,,,,,7UTt+j84qEOjhS1n0C8WUg,2ya+Po++mEmRgIb0PT/3EA,,,N,0,0,,,2014-04-05 12:27,2014-04-05 13:21,admin,admin,
15,139758,1749,36086,642,0,N,N,N,CP_Drtn,TT_Task,DT_FixedDUR2,TK_NotStart,BL2-MEP-EL-GF-2010,Fire Alarm System Wiring,,1056,200,96,0,192,192,96,7123.009694,0,7123.009694,,,,2015-07-15 08:00,2015-07-26 16:00,,2015-02-18 08:00,2015-03-03 16:00,2015-02-18 08:00,2015-03-03 16:00,2015-02-18 08:00,2015-03-03 16:00,2015-07-15 08:00,2015-07-26 16:00,,PT_Normal,,,,,FIW0Ri158UWY0q6vDfhLMA,hC2CVL+rb0uulcpIRJZorg,,,N,0,0,,,2014-04-05 12:27,2014-04-05 13:21,admin,admin,
16,139759,1749,36086,642,0,N,N,N,CP_Drtn,TT_Task,DT_FixedDUR2,TK_NotStart,BL2-MEP-EL-GF-2070,DB's Installation and Termination,4455,936,0,96,0,288,288,96,4982.925025,0,4982.925025,,,,2015-07-15 08:00,2015-07-26 16:00,,2015-03-08 08:00,2015-03-21 16:00,2015-03-08 08:00,2015-03-21 16:00,2015-03-08 08:00,2015-03-21 16:00,2015-07-15 08:00,2015-07-26 16:00,,PT_Normal,,,,,G7qO1Z1G30C4c2J1VGBtow,O83nmhg3d0unSM0Eg3CqNg,,,N,0,0,,,2014-04-05 12:27,2014-04-05 13:21,admin,admin,
17,139760,1749,36086,642,0,N,N,N,CP_Drtn,TT_Task,DT_FixedDUR2,TK_NotStart,BL2-MEP-EL-GF-2050,Low Current  System Wiring,4455,2352,448,112,0,244,244,112,38231.783306,0,38231.783306,,,,2015-12-24 08:00,2016-01-06 16:00,,2015-02-18 08:00,2015-03-05 16:00,2015-02-18 08:00,2015-03-05 16:00,2015-02-18 08:00,2015-03-05 16:00,2015-12-24 08:00,2016-01-06 16:00,,PT_Normal,,,,,K2OYLetkaUi8erWrNN8ZMg,fCeMuUeU00yw1UVq6EADsg,,,N,0,0,,,2014-04-05 12:27,2014-04-05 13:21,admin,admin,
18,139761,1749,36401,642,0,N,N,N,CP_Drtn,TT_Task,DT_FixedDUR2,TK_NotStart,BL2-MEP-AC-GF-3000,Grills and Diffusers Fixing,,1248,56,96,0,384,384,96,11550.608192,0,11550.608192,,,,2015-10-28 08:00,2015-11-08 16:00,,2015-05-24 08:00,2015-06-05 16:00,2015-05-24 08:00,2015-06-05 16:00,2015-05-24 08:00,2015-06-05 16:00,2015-10-28 08:00,2015-11-08 16:00,,PT_Normal,,,,,Ro3zK68YaUONj6T/PWSBTA,265Y1EO9xU24IkPUsX5iJA,,,N,0,0,,,2014-04-05 12:27,2014-04-05 13:21,admin,admin,
19,139762,1749,36326,642,0,N,N,N,CP_Drtn,TT_Task,DT_FixedDUR2,TK_NotStart,BL2-MEP-AC-GF-1000,Supports and Hungers Fixing,,712,128,96,0,192,192,96,338.467259,0,338.467259,,,,2015-04-15 08:00,2015-04-28 16:00,,2014-12-30 08:00,2015-01-14 16:00,2014-12-30 08:00,2015-01-14 16:00,2014-12-30 08:00,2015-01-14 16:00,2015-04-15 08:00,2015-04-28 16:00,,PT_Normal,,,,,KorICVHOj0aISpnoEfYLww,nqTjb0Sn9U2zZemZepkvqQ,,,N,0,0,,,2014-04-05 12:27,2014-04-05 13:21,admin,admin,
20,139763,1749,36371,642,0,N,N,N,CP_Drtn,TT_Task,DT_FixedDUR2,TK_NotStart,BL2-MEP-AC-GF-2000,Fresh Air Duct and Extract Duct Installation and Insulation,4454,488,0,168,0,1008,1008,168,5570.653981,0,5570.653981,,,,2015-04-30 08:00,2015-05-24 16:00,,2015-02-18 08:00,2015-03-14 16:00,2015-02-18 08:00,2015-03-14 16:00,2015-02-18 08:00,2015-03-14 16:00,2015-04-30 08:00,2015-05-24 16:00,,PT_Normal,,,,,kEsuO7Kj4kaJ3a1Nu6jbgQ,374FNNvCmEG+nit0PClx7w,,,N,0,0,,,2014-04-05 12:27,2014-04-05 13:21,admin,admin,
21,139764,1749,36371,642,0,N,N,N,CP_Drtn,TT_Task,DT_FixedDUR2,TK_NotStart,BL2-MEP-AC-GF-2020,Duct Accessories Installation,4457,872,184,112,0,448,448,112,666.965527,0,666.965527,,,,2015-07-13 08:00,2015-07-26 16:00,,2015-03-15 08:00,2015-03-30 16:00,2015-03-15 08:00,2015-03-30 16:00,2015-03-15 08:00,2015-03-30 16:00,2015-07-13 08:00,2015-07-26 16:00,,PT_Normal,,,,,kSB5FDnTxUebndRnzB9wuA,rlZqLsnzHUCcxIGDaMEIqg,,,N,0,0,,,2014-04-05 12:27,2014-04-05 13:21,admin,admin,
22,139765,1749,36371,642,0,N,N,N,CP_Drtn,TT_Task,DT_FixedDUR2,TK_NotStart,BL2-MEP-AC-GF-2050,FCU's Installation,4457,1016,152,64,0,96,96,64,6000.055155,0,6000.055155,,,,2015-07-10 08:00,2015-07-17 16:00,,2015-02-18 08:00,2015-02-26 16:00,2015-02-18 08:00,2015-02-26 16:00,2015-02-18 08:00,2015-02-26 16:00,2015-07-10 08:00,2015-07-17 16:00,,PT_Normal,,,,,pb+qmhWF30eCAU2vUYFodA,WUe+VhhcuU6WKSH8l/n7yA,,,N,0,0,,,2014-04-05 12:27,2014-04-05 13:21,admin,admin,
23,139766,1749,36371,642,0,N,N,N,CP_Drtn,TT_Task,DT_FixedDUR2,TK_NotStart,BL2-MEP-AC-GF-2010,Chilled Water Pipes and Fittings Installation,4457,480,0,168,0,420,420,168,5251.194852,0,5251.194852,,,,2015-04-29 08:00,2015-05-23 16:00,,2015-02-18 08:00,2015-03-14 16:00,2015-02-18 08:00,2015-03-14 16:00,2015-02-18 08:00,2015-03-14 16:00,2015-04-29 08:00,2015-05-23 16:00,,PT_Normal,,,,,M3D2cowaq0+vBBAxQRHuyg,SPa6bhcpSke3u4e/8qDiOg,,,N,0,0,,,2014-04-05 12:27,2014-04-05 13:21,admin,admin,
24,139767,1749,36371,642,0,N,N,N,CP_Drtn,TT_Task,DT_FixedDUR2,TK_NotStart,BL2-MEP-AC-GF-2030,Chilled Water Pipes Pressure Test,4457,864,0,48,0,48,48,48,587.116683,0,587.116683,,,,2015-07-12 08:00,2015-07-17 16:00,,2015-03-15 08:00,2015-03-21 16:00,2015-03-15 08:00,2015-03-21 16:00,2015-03-15 08:00,2015-03-21 16:00,2015-07-12 08:00,2015-07-17 16:00,,PT_Normal,,,,,DzjaLNJ7BUOYI92fYF8LQw,CZM1lQJmvU609002tzWTpQ,,,N,0,0,,,2014-04-05 12:27,2014-04-05 13:21,admin,admin,
25,139768,1749,36371,642,0,N,N,N,CP_Drtn,TT_Task,DT_FixedDUR2,TK_NotStart,BL2-MEP-AC-GF-2040,Chilled Water Pipes Insulation,4457,1536,200,96,0,192,192,96,1670.208495,0,1670.208495,,,,2015-10-10 08:00,2015-10-21 16:00,,2015-03-22 08:00,2015-04-04 16:00,2015-03-22 08:00,2015-04-04 16:00,2015-03-22 08:00,2015-04-04 16:00,2015-10-10 08:00,2015-10-21 16:00,,PT_Normal,,,,,VomHFuXYO0WIDz6HflswLQ,waIa/drI1Uik2wV6RiyPPA,,,N,0,0,,,2014-04-05 12:27,2014-04-05 13:21,admin,admin,
26,139769,1749,36371,642,0,N,N,N,CP_Drtn,TT_Task,DT_FixedDUR2,TK_NotStart,BL2-MEP-AC-GF-2060,Valve Package Installation,4457,864,0,48,0,48,48,48,2386.490429,0,2386.490429,,,,2015-07-18 08:00,2015-07-23 16:00,,2015-03-22 08:00,2015-03-28 16:00,2015-03-22 08:00,2015-03-28 16:00,2015-03-22 08:00,2015-03-28 16:00,2015-07-18 08:00,2015-07-23 16:00,,PT_Normal,,,,,ASlQXVHp2UexXnbxBLScJw,c5MLPYlkDkmK+i8drV+jew,,,N,0,0,,,2014-04-05 12:27,2014-04-05 13:21,admin,admin,
27,139770,1749,36371,642,0,N,N,N,CP_Drtn,TT_Task,DT_FixedDUR2,TK_NotStart,BL2-MEP-AC-GF-2070,FCU's Drain Pipes Installation,4457,864,224,24,0,24,24,24,519.927167,0,519.927167,,,,2015-07-24 08:00,2015-07-26 16:00,,2015-03-29 08:00,2015-03-31 16:00,2015-03-29 08:00,2015-03-31 16:00,2015-03-29 08:00,2015-03-31 16:00,2015-07-24 08:00,2015-07-26 16:00,,PT_Normal,,,,,moP9zTfnYEe0ni5Y+k6r5A,A2XjVnoN+kGwh48DS6X0Wg,,,N,0,0,,,2014-04-05 12:27,2014-04-05 13:21,admin,admin,
28,139771,1749,36364,642,0,N,N,N,CP_Drtn,TT_Task,DT_FixedDUR2,TK_NotStart,BL2-MEP-PL-GF-1000,Low Level Water Supply Pipes Installation,,536,56,96,0,42,42,96,725.216846,0,725.216846,,,,2015-03-24 08:00,2015-04-06 16:00,,2015-01-05 08:00,2015-01-18 16:00,2015-01-05 08:00,2015-01-18 16:00,2015-01-05 08:00,2015-01-18 16:00,2015-03-24 08:00,2015-04-06 16:00,,PT_Normal,,,,,4HOXAtJ6Y0yy3diuwaNBvg,dgPb5Uz+bUKFcaoiE9yURQ,,,N,0,0,,,2014-04-05 12:27,2014-04-05 13:21,admin,admin,
29,139772,1749,36364,642,0,N,N,N,CP_Drtn,TT_Task,DT_FixedDUR2,TK_NotStart,BL2-MEP-PL-GF-1010,Low Level Drainage Pipes Installation,,536,56,96,0,12.67,12.67,96,94.429262,0,94.429262,,,,2015-03-24 08:00,2015-04-06 16:00,,2015-01-05 08:00,2015-01-18 16:00,2015-01-05 08:00,2015-01-18 16:00,2015-01-05 08:00,2015-01-18 16:00,2015-03-24 08:00,2015-04-06 16:00,,PT_Normal,,,,,xtovzoNMiEWBNuZYA1+J1Q,xWi2T5W5k0O1Bb/HiTDmjQ,,,N,0,0,,,2014-04-05 12:27,2014-04-05 13:21,admin,admin,
30,139773,1749,36364,642,0,N,N,N,CP_Drtn,TT_Task,DT_FixedDUR2,TK_NotStart,BL2-MEP-PL-GF-1020,Supports  installation for High level Pipes,,760,176,96,0,16.352,16.352,96,831.682549,0,831.682549,,,,2015-04-26 08:00,2015-05-09 16:00,,2015-01-05 08:00,2015-01-18 16:00,2015-01-05 08:00,2015-01-18 16:00,2015-01-05 08:00,2015-01-18 16:00,2015-04-26 08:00,2015-05-09 16:00,,PT_Normal,,,,,fWR64RqY80OJ3yVxqk4axA,xwcTrQUHQEGpNZehK156aA,,,N,0,0,,,2014-04-05 12:27,2014-04-05 13:21,admin,admin,
31,139774,1749,36392,642,0,N,N,N,CP_Drtn,TT_Task,DT_FixedDUR2,TK_NotStart,BL2-MEP-PL-GF-2030,Floor Drain Installation,,640,0,48,0,6,6,48,554.143324,0,554.143324,,,,2015-07-15 08:00,2015-07-20 16:00,,2015-04-20 08:00,2015-04-26 16:00,2015-04-20 08:00,2015-04-26 16:00,2015-04-20 08:00,2015-04-26 16:00,2015-07-15 08:00,2015-07-20 16:00,,PT_Normal,,,,,jXwkxC0gAEKWHCjO24+8FQ,R2YHPdOsd068lzBBTT6PEA,,,N,0,0,,,2014-04-05 12:27,2014-04-05 13:21,admin,admin,
32,139775,1749,36392,642,0,N,N,N,CP_Drtn,TT_Task,DT_FixedDUR2,TK_NotStart,BL2-MEP-PL-GF-2000,High Level Water Supply Pipes and Fittings Installation,,552,0,168,0,150.02,150.02,168,1329.597866,0,1329.597866,,,,2015-05-10 08:00,2015-06-02 16:00,,2015-02-18 08:00,2015-03-14 16:00,2015-02-18 08:00,2015-03-14 16:00,2015-02-18 08:00,2015-03-14 16:00,2015-05-10 08:00,2015-06-02 16:00,,PT_Normal,,,,,uYITkXI+Gk+b7sCSHz/3Ow,SClm6SVFCkOMq2Me7qkv5Q,,,N,0,0,,,2014-04-05 12:27,2014-04-05 13:21,admin,admin,
33,139776,1749,36392,642,0,N,N,N,CP_Drtn,TT_Task,DT_FixedDUR2,TK_NotStart,BL2-MEP-PL-GF-2010,High Level Drainage Pipes Installation,,552,128,168,0,244.38,244.38,168,6583.525267,0,6583.525267,,,,2015-05-10 08:00,2015-06-02 16:00,,2015-02-18 08:00,2015-03-14 16:00,2015-02-18 08:00,2015-03-14 16:00,2015-02-18 08:00,2015-03-14 16:00,2015-05-10 08:00,2015-06-02 16:00,,PT_Normal,,,,,+ddVAOtks0mvsb8PLgCHSQ,Y0BitodegEC9u3cLmyhIlw,,,N,0,0,,,2014-04-05 12:27,2014-04-05 13:21,admin,admin,
34,139777,1749,36392,642,0,N,N,N,CP_Drtn,TT_Task,DT_FixedDUR2,TK_NotStart,BL2-MEP-PL-GF-2020,Water Supply Pipes Pressure Test,4456,936,248,48,0,48,48,48,151.744312,0,151.744312,,,,2015-07-21 08:00,2015-07-26 16:00,,2015-03-15 08:00,2015-03-21 16:00,2015-03-15 08:00,2015-03-21 16:00,2015-03-15 08:00,2015-03-21 16:00,2015-07-21 08:00,2015-07-26 16:00,,PT_Normal,,,,,5bqbxJPEy0WozxOFHUnk9w,mtYGCHCNAkiOrU04ZeL+OQ,,,N,0,0,,,2014-04-05 12:27,2014-04-05 13:21,admin,admin,
35,139778,1749,36392,642,0,N,N,N,CP_Drtn,TT_Task,DT_FixedDUR2,TK_NotStart,BL2-MEP-PL-GF-2040,Drainage Pipes Gravity Test,,640,0,48,0,48,48,48,826.240719,0,826.240719,,,,2015-07-21 08:00,2015-07-26 16:00,,2015-04-27 08:00,2015-05-03 16:00,2015-04-27 08:00,2015-05-03 16:00,2015-04-27 08:00,2015-05-03 16:00,2015-07-21 08:00,2015-07-26 16:00,,PT_Normal,,,,,/1gsA+Eflky3yXOBBe7YBA,9KtPJLcEjE6oidBY+syjNg,,,N,0,0,,,2014-04-05 12:27,2014-04-05 13:21,admin,admin,
36,139779,1749,36348,642,0,N,N,N,CP_Drtn,TT_Task,DT_FixedDUR2,TK_NotStart,BL2-MEP-PL-GF-3000,Sanitary Ware Installation Including Connection,,704,0,112,0,383.862,383.862,112,4453.516455,0,4453.516455,,,,2015-09-09 08:00,2015-09-22 16:00,,2015-06-13 08:00,2015-06-26 16:00,2015-06-13 08:00,2015-06-26 16:00,2015-06-13 08:00,2015-06-26 16:00,2015-09-09 08:00,2015-09-22 16:00,,PT_Normal,,,,,pxYnt8spYUWzTD4a2HnDkw,l6jKT8MDVUKxqdk4WXsf5Q,,,N,0,0,,,2014-04-05 12:27,2014-04-05 13:21,admin,admin,
37,139780,1749,36348,642,0,N,N,N,CP_Drtn,TT_Task,DT_FixedDUR2,TK_NotStart,BL2-MEP-PL-GF-3010,Sanitary Ware Accessories Installation,,1216,192,48,0,36.45,36.45,48,166.215378,0,166.215378,,,,2015-11-26 08:00,2015-12-01 16:00,,2015-06-27 08:00,2015-07-02 16:00,2015-06-27 08:00,2015-07-02 16:00,2015-06-27 08:00,2015-07-02 16:00,2015-11-26 08:00,2015-12-01 16:00,,PT_Normal,,,,,arknXng9NkO8Fx2VEOWv4g,ODdnqfRKE0akZ3YIDA6N/w,,,N,0,0,,,2014-04-05 12:27,2014-04-05 13:21,admin,admin,
38,139781,1749,36577,642,0,N,N,N,CP_Drtn,TT_Task,DT_FixedDUR2,TK_NotStart,BL2-MEP-FF-GF-3000,Fire Extinguisher Installation,,1072,32,16,0,8,8,16,1076.993507,0,1076.993507,,,,2016-01-26 08:00,2016-01-27 16:00,,2015-09-14 08:00,2015-09-15 16:00,2015-09-14 08:00,2015-09-15 16:00,2015-09-14 08:00,2015-09-15 16:00,2016-01-26 08:00,2016-01-27 16:00,,PT_Normal,,,,,qxmpIlulakeqbAF/sWGDjw,6uw9wZdTAEm006hEHhTsyw,,,N,0,0,,,2014-04-05 12:27,2014-04-05 13:21,admin,admin,
39,139782,1749,36577,642,0,N,N,N,CP_Drtn,TT_Task,DT_FixedDUR2,TK_NotStart,BL2-MEP-FF-GF-3010,Hose reel Cabinet Installation and Connection,,792,0,48,0,192,192,48,1336.852298,0,1336.852298,,,,2015-12-21 08:00,2015-12-26 16:00,,2015-09-13 08:00,2015-09-18 16:00,2015-09-13 08:00,2015-09-18 16:00,2015-09-13 08:00,2015-09-18 16:00,2015-12-21 08:00,2015-12-26 16:00,,PT_Normal,,,,,1GoJEypfCkW/pICfHsXSdw,pnQ5C5VzLkW08/pFWA2gvw,,,N,0,0,,,2014-04-05 12:27,2014-04-05 13:21,admin,admin,
40,139783,1749,36375,642,0,N,N,N,CP_Drtn,TT_Task,DT_FixedDUR2,TK_NotStart,BL2-MEP-AC-6F-1000,Supports and Hungers Fixing,,544,80,96,0,192,192,96,338.467259,0,338.467259,,,,2015-08-26 08:00,2015-09-06 16:00,,2015-06-19 08:00,2015-06-30 16:00,2015-06-19 08:00,2015-06-30 16:00,2015-06-19 08:00,2015-06-30 16:00,2015-08-26 08:00,2015-09-06 16:00,,PT_Normal,,,,,WqnkwElE8UGEYg5SEcULvg,2dktCP18dkWzs3MToKPqMQ,,,N,0,0,,,2014-04-05 12:27,2014-04-05 13:21,admin,admin,
41,139784,1749,36526,642,0,N,N,N,CP_Drtn,TT_Task,DT_FixedDUR2,TK_NotStart,BL2-MEP-AC-6F-3000,Grills and Diffusers Fixing,,872,80,96,0,384,384,96,11550.608192,0,11550.608192,,,,2016-01-08 08:00,2016-01-19 16:00,,2015-09-21 08:00,2015-10-02 16:00,2015-09-21 08:00,2015-10-02 16:00,2015-09-21 08:00,2015-10-02 16:00,2016-01-08 08:00,2016-01-19 16:00,,PT_Normal,,,,,TW38ZQ5tok6umZvFD9JCVQ,CFpgPUCQzEu5gF8pJ/Vc1Q,,,N,0,0,,,2014-04-05 12:27,2014-04-05 13:21,admin,admin,
42,139785,1749,36386,642,0,N,N,N,CP_Drtn,TT_Task,DT_FixedDUR2,TK_NotStart,BL2-MEP-AC-6F-2000,Duct Installation and Insulation,4454,360,0,168,0,263,263,168,4350.939473,0,4350.939473,,,,2015-09-08 08:00,2015-09-28 16:00,,2015-07-25 08:00,2015-08-14 16:00,2015-07-25 08:00,2015-08-14 16:00,2015-07-25 08:00,2015-08-14 16:00,2015-09-08 08:00,2015-09-28 16:00,,PT_Normal,,,,,nZYbV23LS0ae7qDoR552UA,BO+wzoPxAUy8rVMv5+/wuw,,,N,0,0,,,2014-04-05 12:27,2014-04-05 13:21,admin,admin,
43,139786,1749,36386,642,0,N,N,N,CP_Drtn,TT_Task,DT_FixedDUR2,TK_NotStart,BL2-MEP-AC-6F-2030,Duct Accessories Installation,4457,456,56,112,0,448,448,112,666.965527,0,666.965527,,,,2015-10-11 08:00,2015-10-24 16:00,,2015-08-15 08:00,2015-08-28 16:00,2015-08-15 08:00,2015-08-28 16:00,2015-08-15 08:00,2015-08-28 16:00,2015-10-11 08:00,2015-10-24 16:00,,PT_Normal,,,,,dkKpchVrFk2R83jC4wkqFA,fNQDihWfFk6oAqEQ8jx3rg,,,N,0,0,,,2014-04-05 12:27,2014-04-05 13:21,admin,admin,
44,139787,1749,36386,642,0,N,N,N,CP_Drtn,TT_Task,DT_FixedDUR2,TK_NotStart,BL2-MEP-AC-6F-2010,FCU's Installation,4457,640,112,64,0,96,96,64,6000.055155,0,6000.055155,,,,2015-10-08 08:00,2015-10-15 16:00,,2015-07-20 08:00,2015-07-27 16:00,2015-07-20 08:00,2015-07-27 16:00,2015-07-20 08:00,2015-07-27 16:00,2015-10-08 08:00,2015-10-15 16:00,,PT_Normal,,,,,Fa/SeForU06GACffCwEn6A,5/3seKc7XEalJNAG/Nmtpw,,,N,0,0,,,2014-04-05 12:27,2014-04-05 13:21,admin,admin,
45,139788,1749,36386,642,0,N,N,N,CP_Drtn,TT_Task,DT_FixedDUR2,TK_NotStart,BL2-MEP-AC-6F-2020,Chilled Water Pipes and Fittings Installation,4457,352,0,168,0,420,420,168,5251.194852,0,5251.194852,,,,2015-09-07 08:00,2015-09-27 16:00,,2015-07-25 08:00,2015-08-14 16:00,2015-07-25 08:00,2015-08-14 16:00,2015-07-25 08:00,2015-08-14 16:00,2015-09-07 08:00,2015-09-27 16:00,,PT_Normal,,,,,xlefkksKlEGZzGuvdluYLA,Y7jJE4RbO0Gxe0FMpWLB4Q,,,N,0,0,,,2014-04-05 12:27,2014-04-05 13:21,admin,admin,
46,139789,1749,36386,642,0,N,N,N,CP_Drtn,TT_Task,DT_FixedDUR2,TK_NotStart,BL2-MEP-AC-6F-2040,Chilled Water Pipes Pressure Test,4457,448,0,48,0,48,48,48,587.116683,0,587.116683,,,,2015-10-10 08:00,2015-10-15 16:00,,2015-08-15 08:00,2015-08-20 16:00,2015-08-15 08:00,2015-08-20 16:00,2015-08-15 08:00,2015-08-20 16:00,2015-10-10 08:00,2015-10-15 16:00,,PT_Normal,,,,,U6UHK/dzMEKVhV672mhOUw,ca3e4fSks0epmsSmoizq3g,,,N,0,0,,,2014-04-05 12:27,2014-04-05 13:21,admin,admin,
47,139790,1749,36386,642,0,N,N,N,CP_Drtn,TT_Task,DT_FixedDUR2,TK_NotStart,BL2-MEP-AC-6F-2050,Chilled Water Pipes Insulation,4457,976,72,96,0,192,192,96,1670.208495,0,1670.208495,,,,2015-12-21 08:00,2016-01-01 16:00,,2015-08-21 08:00,2015-09-01 16:00,2015-08-21 08:00,2015-09-01 16:00,2015-08-21 08:00,2015-09-01 16:00,2015-12-21 08:00,2016-01-01 16:00,,PT_Normal,,,,,CSAAD3X91E+mK9Z6Gova1g,fcteNOO0AkKHWf3Kls8b5g,,,N,0,0,,,2014-04-05 12:27,2014-04-05 13:21,admin,admin,
48,139791,1749,36386,642,0,N,N,N,CP_Drtn,TT_Task,DT_FixedDUR2,TK_NotStart,BL2-MEP-AC-6F-2060,Valve Package Installation,4457,448,0,48,0,48,48,48,2386.490429,0,2386.490429,,,,2015-10-16 08:00,2015-10-21 16:00,,2015-08-21 08:00,2015-08-26 16:00,2015-08-21 08:00,2015-08-26 16:00,2015-08-21 08:00,2015-08-26 16:00,2015-10-16 08:00,2015-10-21 16:00,,PT_Normal,,,,,Nu/VG2tJpk+i7k1l9o+wsA,VerZmDV7sEGv1Jb/q8GxLQ,,,N,0,0,,,2014-04-05 12:27,2014-04-05 13:21,admin,admin,
49,139792,1749,36386,642,0,N,N,N,CP_Drtn,TT_Task,DT_FixedDUR2,TK_NotStart,BL2-MEP-AC-6F-2070,FCU's Drain Pipes Installation,4457,448,128,24,0,24,24,24,519.927167,0,519.927167,,,,2015-10-22 08:00,2015-10-24 16:00,,2015-08-27 08:00,2015-08-29 16:00,2015-08-27 08:00,2015-08-29 16:00,2015-08-27 08:00,2015-08-29 16:00,2015-10-22 08:00,2015-10-24 16:00,,PT_Normal,,,,,o7ash4KeX0OnDaMMPR+z8A,mevcqVz7WUe2RKrjvOQLpA,,,N,0,0,,,2014-04-05 12:27,2014-04-05 13:21,admin,admin,
50,139793,1749,36325,642,0,N,N,N,CP_Drtn,TT_Task,DT_FixedDUR2,TK_NotStart,BL2-MEP-PL-6F-1000,Low Level Water Supply Pipes Installation,,320,0,96,0,42,42,96,725.216846,0,725.216846,,,,2015-07-29 08:00,2015-08-09 16:00,,2015-06-19 08:00,2015-06-30 16:00,2015-06-19 08:00,2015-06-30 16:00,2015-06-19 08:00,2015-06-30 16:00,2015-07-29 08:00,2015-08-09 16:00,,PT_Normal,,,,,l+bbj7x1fkySUODlqnhLoA,n+YrjgcjHkaDCY7Z9H1Y/A,,,N,0,0,,,2014-04-05 12:27,2014-04-05 13:21,admin,admin,
51,139794,1749,36325,642,0,N,N,N,CP_Drtn,TT_Task,DT_FixedDUR2,TK_NotStart,BL2-MEP-PL-6F-1010,Low Level Drainage Pipes Installation,,320,0,96,0,12.67,12.67,96,2291.461713,0,2291.461713,,,,2015-07-29 08:00,2015-08-09 16:00,,2015-06-19 08:00,2015-06-30 16:00,2015-06-19 08:00,2015-06-30 16:00,2015-06-19 08:00,2015-06-30 16:00,2015-07-29 08:00,2015-08-09 16:00,,PT_Normal,,,,,N28MrzmKpEKQXpdpmuumLw,KubwqDI030qJ6V7sFwjaZA,,,N,0,0,,,2014-04-05 12:27,2014-04-05 13:21,admin,admin,
52,139795,1749,36325,642,0,N,N,N,CP_Drtn,TT_Task,DT_FixedDUR2,TK_NotStart,BL2-MEP-PL-6F-1020,Supports  installation for High level Pipes,,616,80,96,0,16.352,16.352,96,831.682549,0,831.682549,,,,2015-09-04 08:00,2015-09-15 16:00,,2015-06-19 08:00,2015-06-30 16:00,2015-06-19 08:00,2015-06-30 16:00,2015-06-19 08:00,2015-06-30 16:00,2015-09-04 08:00,2015-09-15 16:00,,PT_Normal,,,,,1zKy5h9EuEq9pBSjoc1XBw,M9/EpZU4gkemGgKHh/tHsA,,,N,0,0,,,2014-04-05 12:27,2014-04-05 13:21,admin,admin,
53,139796,1749,36362,642,0,N,N,N,CP_Drtn,TT_Task,DT_FixedDUR2,TK_NotStart,BL2-MEP-PL-6F-2030,Floor Drain Installation,,320,0,48,0,6,6,48,554.143324,0,554.143324,,,,2015-10-13 08:00,2015-10-18 16:00,,2015-09-03 08:00,2015-09-08 16:00,2015-09-03 08:00,2015-09-08 16:00,2015-09-03 08:00,2015-09-08 16:00,2015-10-13 08:00,2015-10-18 16:00,,PT_Normal,,,,,AIbxbB7Q50SJAlwrj7YIoA,cQbCq2bKi0O17mh9vHHyrg,,,N,0,0,,,2014-04-05 12:27,2014-04-05 13:21,admin,admin,
54,139797,1749,36362,642,0,N,N,N,CP_Drtn,TT_Task,DT_FixedDUR2,TK_NotStart,BL2-MEP-PL-6F-2000,High Level Water Supply Pipes and Fittings Installation,,424,0,168,0,150.02,150.02,168,1329.597866,0,1329.597866,,,,2015-09-16 08:00,2015-10-06 16:00,,2015-07-25 08:00,2015-08-14 16:00,2015-07-25 08:00,2015-08-14 16:00,2015-07-25 08:00,2015-08-14 16:00,2015-09-16 08:00,2015-10-06 16:00,,PT_Normal,,,,,fMLYASp1FU+xWg8e3wtiEQ,5a15P+N4rkW5ng1bo52mGA,,,N,0,0,,,2014-04-05 12:27,2014-04-05 13:21,admin,admin,
55,139798,1749,36362,642,0,N,N,N,CP_Drtn,TT_Task,DT_FixedDUR2,TK_NotStart,BL2-MEP-PL-6F-2010,High Level Drainage Pipes Installation,,424,0,168,0,244.38,244.38,168,6583.525267,0,6583.525267,,,,2015-09-16 08:00,2015-10-06 16:00,,2015-07-25 08:00,2015-08-14 16:00,2015-07-25 08:00,2015-08-14 16:00,2015-07-25 08:00,2015-08-14 16:00,2015-09-16 08:00,2015-10-06 16:00,,PT_Normal,,,,,t1jVY8fK90ma/8bqjhwSmQ,/DTYqrpppUKSl7i4YUk1nA,,,N,0,0,,,2014-04-05 12:27,2014-04-05 13:21,admin,admin,
56,139799,1749,36362,642,0,N,N,N,CP_Drtn,TT_Task,DT_FixedDUR2,TK_NotStart,BL2-MEP-PL-6F-2020,Water Supply Pipes Pressure Test,4456,520,120,48,0,48,48,48,151.744312,0,151.744312,,,,2015-10-19 08:00,2015-10-24 16:00,,2015-08-15 08:00,2015-08-20 16:00,2015-08-15 08:00,2015-08-20 16:00,2015-08-15 08:00,2015-08-20 16:00,2015-10-19 08:00,2015-10-24 16:00,,PT_Normal,,,,,QeIAnH1PYkycFn7r1Q5UGA,EjTD0iQHA0+hH1ICl7+bZw,,,N,0,0,,,2014-04-05 12:27,2014-04-05 13:21,admin,admin,
57,139800,1749,36362,642,0,N,N,N,CP_Drtn,TT_Task,DT_FixedDUR2,TK_NotStart,BL2-MEP-PL-6F-2040,Drainage Pipes Gravity Test,,320,0,48,0,48,48,48,826.240719,0,826.240719,,,,2015-10-19 08:00,2015-10-24 16:00,,2015-09-09 08:00,2015-09-14 16:00,2015-09-09 08:00,2015-09-14 16:00,2015-09-09 08:00,2015-09-14 16:00,2015-10-19 08:00,2015-10-24 16:00,,PT_Normal,,,,,TFoHaj+ObEOkM/Dg6uKTcg,YWOyL3gSK0eb4QNUyyVSEA,,,N,0,0,,,2014-04-05 12:27,2014-04-05 13:21,admin,admin,
58,139801,1749,36390,642,0,N,N,N,CP_Drtn,TT_Task,DT_FixedDUR2,TK_NotStart,BL2-MEP-PL-6F-3000,Sanitary Ware Installation Including Connection,,336,0,112,0,383.862,383.862,112,4453.516455,0,4453.516455,,,,2015-12-02 08:00,2015-12-15 16:00,,2015-10-21 08:00,2015-11-03 16:00,2015-10-21 08:00,2015-11-03 16:00,2015-10-21 08:00,2015-11-03 16:00,2015-12-02 08:00,2015-12-15 16:00,,PT_Normal,,,,,4N7VY4I+oEuLns4hOI7UrQ,suBM6SKU40Wq3KCU9cunkg,,,N,0,0,,,2014-04-05 12:27,2014-04-05 13:21,admin,admin,
59,139802,1749,36390,642,0,N,N,N,CP_Drtn,TT_Task,DT_FixedDUR2,TK_NotStart,BL2-MEP-PL-6F-3010,Sanitary Ware Accessories Installation,,464,0,48,0,36.45,36.45,48,166.215378,0,166.215378,,,,2016-01-01 08:00,2016-01-06 16:00,,2015-11-04 08:00,2015-11-09 16:00,2015-11-04 08:00,2015-11-09 16:00,2015-11-04 08:00,2015-11-09 16:00,2016-01-01 08:00,2016-01-06 16:00,,PT_Normal,,,,,8aeYE3QAVk67wrLkci1cFw,HVjixVW1wkCzoP9bDcIURw,,,N,0,0,,,2014-04-05 12:27,2014-04-05 13:21,admin,admin,
60,139803,1749,36383,642,0,N,N,N,CP_Drtn,TT_Task,DT_FixedDUR2,TK_NotStart,BL2-MEP-FF-6F-3000,Fire Extinguisher Installation,,752,160,16,0,8,8,16,1076.993507,0,1076.993507,,,,2016-02-07 08:00,2016-02-08 16:00,,2015-11-05 08:00,2015-11-06 16:00,2015-11-05 08:00,2015-11-06 16:00,2015-11-05 08:00,2015-11-06 16:00,2016-02-07 08:00,2016-02-08 16:00,,PT_Normal,,,,,y/e/IaKrzEiwcvUw/Z4obA,HhElOIOYPkGtHhncwFhUTw,,,N,0,0,,,2014-04-05 12:27,2014-04-05 13:21,admin,admin,
61,139804,1749,36383,642,0,N,N,N,CP_Drtn,TT_Task,DT_FixedDUR2,TK_NotStart,BL2-MEP-FF-6F-3010,Hose reel Cabinet Installation and Connection,,792,0,48,0,192,192,48,1336.852298,0,1336.852298,,,,2016-01-26 08:00,2016-01-31 16:00,,2015-10-19 08:00,2015-10-24 16:00,2015-10-19 08:00,2015-10-24 16:00,2015-10-19 08:00,2015-10-24 16:00,2016-01-26 08:00,2016-01-31 16:00,,PT_Normal,,,,,CDDHufcLs0irm9JjLc9+cQ,NRSnf/sGlkCsMka7HEQbKQ,,,N,0,0,,,2014-04-05 12:27,2014-04-05 13:21,admin,admin,
62,139805,1749,36117,642,0,N,N,N,CP_Drtn,TT_Task,DT_FixedDUR2,TK_NotStart,BL2-MEP-EL-6F-1000,PVC Back Boxes and Conduits  Fixing in Wall,,304,72,96,0,384,384,96,3319.67233,0,3319.67233,,,,2015-07-18 08:00,2015-07-29 16:00,,2015-06-10 08:00,2015-06-21 16:00,2015-06-10 08:00,2015-06-21 16:00,2015-06-10 08:00,2015-06-21 16:00,2015-07-18 08:00,2015-07-29 16:00,,PT_Normal,,,,,sxrhl2SH3kWv7NCmv6pqxA,uddSJhKxg06D1QYwqlPDlQ,,,N,0,0,,,2014-04-05 12:27,2014-04-05 13:21,admin,admin,
63,139806,1749,36117,642,0,N,N,N,CP_Drtn,TT_Task,DT_FixedDUR2,TK_NotStart,BL2-MEP-EL-6F-1010,DB's Inclosure Fixing,4455,368,48,48,0,96,96,48,2136.399392,0,2136.399392,,,,2015-08-04 08:00,2015-08-09 16:00,,2015-06-19 08:00,2015-06-24 16:00,2015-06-19 08:00,2015-06-24 16:00,2015-06-19 08:00,2015-06-24 16:00,2015-08-04 08:00,2015-08-09 16:00,,PT_Normal,,,,,x/KpQ4YS4kaO8OAxQbDJVA,BzOgVetSAU+Vd3Mh4xzzeA,,,N,0,0,,,2014-04-05 12:27,2014-04-05 13:21,admin,admin,
64,139807,1749,36055,642,0,N,N,N,CP_Drtn,TT_Task,DT_FixedDUR2,TK_NotStart,BL2-MEP-EL-6F-2060,SMDB's  Installation,,1272,128,48,0,45,45,48,4202.598932,0,4202.598932,,,,2016-01-10 08:00,2016-01-15 16:00,,2015-08-04 08:00,2015-08-09 16:00,2015-08-04 08:00,2015-08-09 16:00,2015-08-04 08:00,2015-08-09 16:00,2016-01-10 08:00,2016-01-15 16:00,,PT_Normal,,,,,SH9QmtOemUCRpS4joKyfPw,xvFOxWtZ7USxAniBpJulWA,,,N,0,0,,,2014-04-05 12:27,2014-04-05 13:21,admin,admin,
65,139808,1749,36055,642,0,N,N,N,CP_Drtn,TT_Task,DT_FixedDUR2,TK_NotStart,BL2-MEP-EL-6F-2000,Lighting  Wiring,,680,80,96,0,241.713,241.713,96,3578.08423,0,3578.08423,,,,2015-10-13 08:00,2015-10-24 16:00,,2015-07-20 08:00,2015-07-31 16:00,2015-07-20 08:00,2015-07-31 16:00,2015-07-20 08:00,2015-07-31 16:00,2015-10-13 08:00,2015-10-24 16:00,,PT_Normal,,,,,e3g5E1MhZE68zAXW6dBtrg,faLLIHaGM0eW9SCMgzvjSg,,,N,0,0,,,2014-04-05 12:27,2014-04-05 13:21,admin,admin,
66,139809,1749,36055,642,0,N,N,N,CP_Drtn,TT_Task,DT_FixedDUR2,TK_NotStart,BL2-MEP-EL-6F-2010,Power Points Wiring,,680,80,96,0,192,192,96,2906.213289,0,2906.213289,,,,2015-10-13 08:00,2015-10-24 16:00,,2015-07-20 08:00,2015-07-31 16:00,2015-07-20 08:00,2015-07-31 16:00,2015-07-20 08:00,2015-07-31 16:00,2015-10-13 08:00,2015-10-24 16:00,,PT_Normal,,,,,rNFn3mSjdE2I4EZzJMAqxQ,MRjFFXVoYUGWeB/9JrIfew,,,N,0,0,,,2014-04-05 12:27,2014-04-05 13:21,admin,admin,
67,139810,1749,36055,642,0,N,N,N,CP_Drtn,TT_Task,DT_FixedDUR2,TK_NotStart,BL2-MEP-EL-6F-2020,Cable Tray and Trunking Installation,,664,64,112,0,336,336,112,9078.448617,0,9078.448617,,,,2015-10-11 08:00,2015-10-24 16:00,,2015-07-20 08:00,2015-08-02 16:00,2015-07-20 08:00,2015-08-02 16:00,2015-07-20 08:00,2015-08-02 16:00,2015-10-11 08:00,2015-10-24 16:00,,PT_Normal,,,,,ftZkmToqQUa3zt9mIofMAA,U8Tc5r9DK0yI9nTpxhnuWw,,,N,0,0,,,2014-04-05 12:27,2014-04-05 13:21,admin,admin,
68,139811,1749,36055,642,0,N,N,N,CP_Drtn,TT_Task,DT_FixedDUR2,TK_NotStart,BL2-MEP-EL-6F-2030,Emergency Light Wiring,,712,112,64,0,128,128,64,1210.028798,0,1210.028798,,,,2015-10-17 08:00,2015-10-24 16:00,,2015-07-20 08:00,2015-07-27 16:00,2015-07-20 08:00,2015-07-27 16:00,2015-07-20 08:00,2015-07-27 16:00,2015-10-17 08:00,2015-10-24 16:00,,PT_Normal,,,,,o3xlCqWfhkSc/dj7HLhcvg,WasdbJw06U6B0iXaDh9iwg,,,N,0,0,,,2014-04-05 12:27,2014-04-05 13:21,admin,admin,
69,139812,1749,36055,642,0,N,N,N,CP_Drtn,TT_Task,DT_FixedDUR2,TK_NotStart,BL2-MEP-EL-6F-2040,Fire Alarm System Wiring,,680,80,96,0,192,192,96,7123.009694,0,7123.009694,,,,2015-10-13 08:00,2015-10-24 16:00,,2015-07-20 08:00,2015-07-31 16:00,2015-07-20 08:00,2015-07-31 16:00,2015-07-20 08:00,2015-07-31 16:00,2015-10-13 08:00,2015-10-24 16:00,,PT_Normal,,,,,9KjxmXO9H02ZHt1xBTtdsg,3u9gjA9S8E+b89Nz0sssGg,,,N,0,0,,,2014-04-05 12:27,2014-04-05 13:21,admin,admin,
70,139813,1749,36055,642,0,N,N,N,CP_Drtn,TT_Task,DT_FixedDUR2,TK_NotStart,BL2-MEP-EL-6F-2070,DB's Installation and Termination,4455,560,0,96,0,288,288,96,4982.925025,0,4982.925025,,,,2015-10-13 08:00,2015-10-24 16:00,,2015-08-04 08:00,2015-08-15 16:00,2015-08-04 08:00,2015-08-15 16:00,2015-08-04 08:00,2015-08-15 16:00,2015-10-13 08:00,2015-10-24 16:00,,PT_Normal,,,,,g50ujN4wOkqjYkpQQjPFUA,KAo5G60UWEeSDBKz5X6JiQ,,,N,0,0,,,2014-04-05 12:27,2014-04-05 13:21,admin,admin,
71,139814,1749,36055,642,0,N,N,N,CP_Drtn,TT_Task,DT_FixedDUR2,TK_NotStart,BL2-MEP-EL-6F-2050,Low Current  System Wiring,4455,1352,392,112,0,244,244,112,38231.783306,0,38231.783306,,,,2016-01-05 08:00,2016-01-18 16:00,,2015-07-20 08:00,2015-08-02 16:00,2015-07-20 08:00,2015-08-02 16:00,2015-07-20 08:00,2015-08-02 16:00,2016-01-05 08:00,2016-01-18 16:00,,PT_Normal,,,,,vrOmMIpC5km5tgfnfueIMA,vLPd8NJ4YE+YbaH8sz9avQ,,,N,0,0,,,2014-04-05 12:27,2014-04-05 13:21,admin,admin,
72,139815,1749,36178,642,0,N,N,N,CP_Drtn,TT_Task,DT_FixedDUR2,TK_NotStart,BL2-MEP-EL-6F-3020,Lights Fitting Fixing,,744,64,112,0,244,244,112,7336.659378,0,7336.659378,,,,2015-12-23 08:00,2016-01-05 16:00,,2015-09-21 08:00,2015-10-04 16:00,2015-09-21 08:00,2015-10-04 16:00,2015-09-21 08:00,2015-10-04 16:00,2015-12-23 08:00,2016-01-05 16:00,,PT_Normal,,,,,z1rawl0idkWTD4E4wU616A,Rn2ZdrJQcUW7MY/XX1Vvzg,,,N,0,0,,,2014-04-05 12:27,2014-04-05 13:21,admin,admin,
73,139816,1749,36178,642,0,N,N,N,CP_Drtn,TT_Task,DT_FixedDUR2,TK_NotStart,BL2-MEP-EL-6F-3070,Sockets and Switches Fixing,,936,112,64,0,128,128,64,1174.957134,0,1174.957134,,,,2016-01-16 08:00,2016-01-23 16:00,,2015-09-21 08:00,2015-09-28 16:00,2015-09-21 08:00,2015-09-28 16:00,2015-09-21 08:00,2015-09-28 16:00,2016-01-16 08:00,2016-01-23 16:00,,PT_Normal,,,,,8XZOJ4K2oUeQmj9HfLcSUQ,IvIixR7RNkikeGeokkYNyQ,,,N,0,0,,,2014-04-05 12:27,2014-04-05 13:21,admin,admin,
74,139817,1749,36178,642,0,N,N,N,CP_Drtn,TT_Task,DT_FixedDUR2,TK_NotStart,BL2-MEP-EL-6F-3030,Emergency Light Fixing,,992,112,64,0,128,128,64,5722.024623,0,5722.024623,,,,2016-01-23 08:00,2016-01-30 16:00,,2015-09-21 08:00,2015-09-28 16:00,2015-09-21 08:00,2015-09-28 16:00,2015-09-21 08:00,2015-09-28 16:00,2016-01-23 08:00,2016-01-30 16:00,,PT_Normal,,,,,lNe/ntIKtUGktKOhEyapqQ,MSCsYCb/30OS+j7vs838PA,,,N,0,0,,,2014-04-05 12:27,2014-04-05 13:21,admin,admin,
75,139818,1749,36178,642,0,N,N,N,CP_Drtn,TT_Task,DT_FixedDUR2,TK_NotStart,BL2-MEP-EL-6F-3000,Fire Alarm System Detector Installation,,808,80,96,0,192,192,96,4046.378277,0,4046.378277,,,,2015-12-31 08:00,2016-01-11 16:00,,2015-09-21 08:00,2015-10-02 16:00,2015-09-21 08:00,2015-10-02 16:00,2015-09-21 08:00,2015-10-02 16:00,2015-12-31 08:00,2016-01-11 16:00,,PT_Normal,,,,,k3gNNyNP1kyOxtD0/BI8Ow,r0mh9IqWcUiBpBz6qqvq+w,,,N,0,0,,,2014-04-05 12:27,2014-04-05 13:21,admin,admin,
76,139819,1749,36178,642,0,N,N,N,CP_Drtn,TT_Task,DT_FixedDUR2,TK_NotStart,BL2-MEP-EL-6F-3050,SMDB's  Termination and Final Connection,,936,128,48,0,192,192,48,2791.825001,0,2791.825001,,,,2016-01-16 08:00,2016-01-21 16:00,,2015-09-21 08:00,2015-09-26 16:00,2015-09-21 08:00,2015-09-26 16:00,2015-09-21 08:00,2015-09-26 16:00,2016-01-16 08:00,2016-01-21 16:00,,PT_Normal,,,,,C6tjB8LWa0Sk3Him6rXjYA,imzLDIf88Uy97iXBF3eduA,,,N,0,0,,,2014-04-05 12:27,2014-04-05 13:21,admin,admin,
77,139820,1749,36055,642,0,N,N,N,CP_Drtn,TT_Task,DT_FixedDUR2,TK_NotStart,BL2-MEP-EL-6F-3010,Power Cable Puling,,920,64,112,0,168,168,112,6375.759893,0,6375.759893,,,,2015-12-09 08:00,2015-12-22 16:00,,2015-08-16 08:00,2015-08-29 16:00,2015-08-16 08:00,2015-08-29 16:00,2015-08-16 08:00,2015-08-29 16:00,2015-12-09 08:00,2015-12-22 16:00,,PT_Normal,,,,,/rfotvie1kyaLy9wtBlG+w,KW1qCBLOGUOZa8aqFLRsKQ,,,N,0,0,,,2014-04-05 12:27,2014-04-05 13:21,admin,admin,
78,139821,1749,36178,642,0,N,N,N,CP_Drtn,TT_Task,DT_FixedDUR2,TK_NotStart,BL2-MEP-EL-6F-3040,Despature for Low Current  System Installation,4455,960,0,112,0,336,336,112,72752.164276,0,72752.164276,,,,2016-01-19 08:00,2016-02-01 16:00,,2015-09-21 08:00,2015-10-04 16:00,2015-09-21 08:00,2015-10-04 16:00,2015-09-21 08:00,2015-10-04 16:00,2016-01-19 08:00,2016-02-01 16:00,,PT_Normal,,,,,Z9wup0rqZUiIscg4WUQlZA,IVqPuUZZwki6XjAAXZnnag,,,N,0,0,,,2014-04-05 12:27,2014-04-05 13:21,admin,admin,
79,139822,1749,36178,642,0,N,N,N,CP_Drtn,TT_Task,DT_FixedDUR2,TK_NotStart,BL2-MEP-EL-6F-3060,Low Current  System Outlet installation and Connection,4455,960,208,80,0,80,80,80,3870.787498,0,3870.787498,,,,2016-02-02 08:00,2016-02-11 16:00,,2015-10-05 08:00,2015-10-14 16:00,2015-10-05 08:00,2015-10-14 16:00,2015-10-05 08:00,2015-10-14 16:00,2016-02-02 08:00,2016-02-11 16:00,,PT_Normal,,,,,dbgQlJOBY0+LIw8w6nW3xg,rLryWM+zjUymC64wP/sySQ,,,N,0,0,,,2014-04-05 12:27,2014-04-05 13:21,admin,admin,
80,139823,1749,36394,642,0,N,N,N,CP_Drtn,TT_Task,DT_FixedDUR2,TK_NotStart,BL2-MEP-AC-7F-1000,Supports and Hungers Fixing,,536,16,96,0,192,192,96,338.467259,0,338.467259,,,,2015-09-16 08:00,2015-09-27 16:00,,2015-07-11 08:00,2015-07-22 16:00,2015-07-11 08:00,2015-07-22 16:00,2015-07-11 08:00,2015-07-22 16:00,2015-09-16 08:00,2015-09-27 16:00,,PT_Normal,,,,,kqHkave+lkKHvsTLG1S9pw,Cp2p8Ixi/UeOS9bTMyW+5g,,,N,0,0,,,2014-04-05 12:27,2014-04-05 13:21,admin,admin,
81,139824,1749,36395,642,0,N,N,N,CP_Drtn,TT_Task,DT_FixedDUR2,TK_NotStart,BL2-MEP-AC-7F-2000,Duct Installation and Insulation,4454,360,0,168,0,263,263,168,4350.939473,0,4350.939473,,,,2015-09-29 08:00,2015-10-19 16:00,,2015-08-15 08:00,2015-09-04 16:00,2015-08-15 08:00,2015-09-04 16:00,2015-08-15 08:00,2015-09-04 16:00,2015-09-29 08:00,2015-10-19 16:00,,PT_Normal,,,,,ZTGmrVFq5ECgHCVrpWMm/w,kA0Oplypok+yXuxLft5oaA,,,N,0,0,,,2014-04-05 12:27,2014-04-05 13:21,admin,admin,
82,139825,1749,36395,642,0,N,N,N,CP_Drtn,TT_Task,DT_FixedDUR2,TK_NotStart,BL2-MEP-AC-7F-2030,Duct Accessories Installation,4457,408,56,112,0,448,448,112,666.965527,0,666.965527,,,,2015-10-26 08:00,2015-11-08 16:00,,2015-09-05 08:00,2015-09-18 16:00,2015-09-05 08:00,2015-09-18 16:00,2015-09-05 08:00,2015-09-18 16:00,2015-10-26 08:00,2015-11-08 16:00,,PT_Normal,,,,,1HGxBjungEq36lG77te88A,hOG40Fmw0U2/BBvUuHQVow,,,N,0,0,,,2014-04-05 12:27,2014-04-05 13:21,admin,admin,
83,139826,1749,36395,642,0,N,N,N,CP_Drtn,TT_Task,DT_FixedDUR2,TK_NotStart,BL2-MEP-AC-7F-2010,FCU's Installation,4457,584,48,64,0,96,96,64,6000.055155,0,6000.055155,,,,2015-10-23 08:00,2015-10-30 16:00,,2015-08-11 08:00,2015-08-18 16:00,2015-08-11 08:00,2015-08-18 16:00,2015-08-11 08:00,2015-08-18 16:00,2015-10-23 08:00,2015-10-30 16:00,,PT_Normal,,,,,CM+1oO2nwkGte49JjgqROg,Cl1wAg7KDkCUdtW5ODgynw,,,N,0,0,,,2014-04-05 12:27,2014-04-05 13:21,admin,admin,
84,139827,1749,36395,642,0,N,N,N,CP_Drtn,TT_Task,DT_FixedDUR2,TK_NotStart,BL2-MEP-AC-7F-2020,Chilled Water Pipes and Fittings Installation,4457,352,0,168,0,420,420,168,5251.194852,0,5251.194852,,,,2015-09-28 08:00,2015-10-18 16:00,,2015-08-15 08:00,2015-09-04 16:00,2015-08-15 08:00,2015-09-04 16:00,2015-08-15 08:00,2015-09-04 16:00,2015-09-28 08:00,2015-10-18 16:00,,PT_Normal,,,,,b6p0k5alv0+OyattY4ebEQ,eWRfImmLe0iz7D3/wJYBpw,,,N,0,0,,,2014-04-05 12:27,2014-04-05 13:21,admin,admin,
85,139828,1749,36395,642,0,N,N,N,CP_Drtn,TT_Task,DT_FixedDUR2,TK_NotStart,BL2-MEP-AC-7F-2040,Chilled Water Pipes Pressure Test,4457,400,0,48,0,48,48,48,587.116683,0,587.116683,,,,2015-10-25 08:00,2015-10-30 16:00,,2015-09-05 08:00,2015-09-10 16:00,2015-09-05 08:00,2015-09-10 16:00,2015-09-05 08:00,2015-09-10 16:00,2015-10-25 08:00,2015-10-30 16:00,,PT_Normal,,,,,zVCifF7Db0aloLtRoiMZpA,0HQxleq+JkKCvaG81gx1wQ,,,N,0,0,,,2014-04-05 12:27,2014-04-05 13:21,admin,admin,
86,139829,1749,36395,642,0,N,N,N,CP_Drtn,TT_Task,DT_FixedDUR2,TK_NotStart,BL2-MEP-AC-7F-2050,Chilled Water Pipes Insulation,4457,904,72,96,0,192,192,96,1670.208495,0,1670.208495,,,,2016-01-02 08:00,2016-01-13 16:00,,2015-09-11 08:00,2015-09-22 16:00,2015-09-11 08:00,2015-09-22 16:00,2015-09-11 08:00,2015-09-22 16:00,2016-01-02 08:00,2016-01-13 16:00,,PT_Normal,,,,,KZZblqM3UUWnCiKtn+rlnA,VKnqZVBWbE60VZoUm6hiDg,,,N,0,0,,,2014-04-05 12:27,2014-04-05 13:21,admin,admin,
87,139830,1749,36395,642,0,N,N,N,CP_Drtn,TT_Task,DT_FixedDUR2,TK_NotStart,BL2-MEP-AC-7F-2060,Valve Package Installation,4457,400,0,48,0,48,48,48,2386.490429,0,2386.490429,,,,2015-10-31 08:00,2015-11-05 16:00,,2015-09-11 08:00,2015-09-16 16:00,2015-09-11 08:00,2015-09-16 16:00,2015-09-11 08:00,2015-09-16 16:00,2015-10-31 08:00,2015-11-05 16:00,,PT_Normal,,,,,V04VudKJ/EKm01kW0ARGKQ,0T4PfpqD6kaML3Wt4j0BrQ,,,N,0,0,,,2014-04-05 12:27,2014-04-05 13:21,admin,admin,
88,139831,1749,36395,642,0,N,N,N,CP_Drtn,TT_Task,DT_FixedDUR2,TK_NotStart,BL2-MEP-AC-7F-2070,FCU's Drain Pipes Installation,4457,400,136,24,0,24,24,24,519.927167,0,519.927167,,,,2015-11-06 08:00,2015-11-08 16:00,,2015-09-17 08:00,2015-09-19 16:00,2015-09-17 08:00,2015-09-19 16:00,2015-09-17 08:00,2015-09-19 16:00,2015-11-06 08:00,2015-11-08 16:00,,PT_Normal,,,,,uHvJ3+M56ESwrSrWggtUlw,2fsoftcpRUiYZt5Zaj9XpA,,,N,0,0,,,2014-04-05 12:27,2014-04-05 13:21,admin,admin,
89,139832,1749,36437,642,0,N,N,N,CP_Drtn,TT_Task,DT_FixedDUR2,TK_NotStart,BL2-MEP-AC-7F-3000,Grills and Diffusers Fixing,,792,16,96,0,384,384,96,11550.608192,0,11550.608192,,,,2016-01-20 08:00,2016-01-31 16:00,,2015-10-13 08:00,2015-10-24 16:00,2015-10-13 08:00,2015-10-24 16:00,2015-10-13 08:00,2015-10-24 16:00,2016-01-20 08:00,2016-01-31 16:00,,PT_Normal,,,,,xbYUk/V4s0CMT/xN1HmXjw,pCp6GkLpg0+KLh5uKteD4g,,,N,0,0,,,2014-04-05 12:27,2014-04-05 13:21,admin,admin,
90,139833,1749,36339,642,0,N,N,N,CP_Drtn,TT_Task,DT_FixedDUR2,TK_NotStart,BL2-MEP-PL-7F-1000,Low Level Water Supply Pipes Installation,,264,0,96,0,42,42,96,725.216846,0,725.216846,,,,2015-08-13 08:00,2015-08-24 16:00,,2015-07-11 08:00,2015-07-22 16:00,2015-07-11 08:00,2015-07-22 16:00,2015-07-11 08:00,2015-07-22 16:00,2015-08-13 08:00,2015-08-24 16:00,,PT_Normal,,,,,9Vcu4ul3fEyhSJLyI5D+xA,coZ2kM3ZlEGPMfdittcMoQ,,,N,0,0,,,2014-04-05 12:27,2014-04-05 13:21,admin,admin,
91,139834,1749,36339,642,0,N,N,N,CP_Drtn,TT_Task,DT_FixedDUR2,TK_NotStart,BL2-MEP-PL-7F-1010,Low Level Drainage Pipes Installation,,264,0,96,0,12.67,12.67,96,2291.461713,0,2291.461713,,,,2015-08-13 08:00,2015-08-24 16:00,,2015-07-11 08:00,2015-07-22 16:00,2015-07-11 08:00,2015-07-22 16:00,2015-07-11 08:00,2015-07-22 16:00,2015-08-13 08:00,2015-08-24 16:00,,PT_Normal,,,,,RQaW8uxVNEuDncEnwDaQIA,BiT8d61qHUOpVliBJjgEdw,,,N,0,0,,,2014-04-05 12:27,2014-04-05 13:21,admin,admin,
92,139835,1749,36339,642,0,N,N,N,CP_Drtn,TT_Task,DT_FixedDUR2,TK_NotStart,BL2-MEP-PL-7F-1020,Supports  installation for High level Pipes,,608,16,96,0,16.352,16.352,96,831.682549,0,831.682549,,,,2015-09-25 08:00,2015-10-06 16:00,,2015-07-11 08:00,2015-07-22 16:00,2015-07-11 08:00,2015-07-22 16:00,2015-07-11 08:00,2015-07-22 16:00,2015-09-25 08:00,2015-10-06 16:00,,PT_Normal,,,,,BsGSkFbhzkicOlrkjYpHXA,t/G4dmGjHkKn6qrOgCR50A,,,N,0,0,,,2014-04-05 12:27,2014-04-05 13:21,admin,admin,
93,139836,1749,36340,642,0,N,N,N,CP_Drtn,TT_Task,DT_FixedDUR2,TK_NotStart,BL2-MEP-PL-7F-2030,Floor Drain Installation,,264,0,48,0,6,6,48,554.143324,0,554.143324,,,,2015-10-28 08:00,2015-11-02 16:00,,2015-09-25 08:00,2015-09-30 16:00,2015-09-25 08:00,2015-09-30 16:00,2015-09-25 08:00,2015-09-30 16:00,2015-10-28 08:00,2015-11-02 16:00,,PT_Normal,,,,,jWwYFTmIekeXA6qHf82zmw,gff1OzEIIkWjZ0DtuFVNYA,,,N,0,0,,,2014-04-05 12:27,2014-04-05 13:21,admin,admin,
94,139837,1749,36340,642,0,N,N,N,CP_Drtn,TT_Task,DT_FixedDUR2,TK_NotStart,BL2-MEP-PL-7F-2000,High Level Water Supply Pipes and Fittings Installation,,424,0,168,0,150.02,150.02,168,1329.597866,0,1329.597866,,,,2015-10-07 08:00,2015-10-27 16:00,,2015-08-15 08:00,2015-09-04 16:00,2015-08-15 08:00,2015-09-04 16:00,2015-08-15 08:00,2015-09-04 16:00,2015-10-07 08:00,2015-10-27 16:00,,PT_Normal,,,,,m16XqAeta0meKegoM1LHpw,Kh9JS499EEGAYMT/VhO9Zw,,,N,0,0,,,2014-04-05 12:27,2014-04-05 13:21,admin,admin,
95,139838,1749,36340,642,0,N,N,N,CP_Drtn,TT_Task,DT_FixedDUR2,TK_NotStart,BL2-MEP-PL-7F-2010,High Level Drainage Pipes Installation,,424,0,168,0,244.38,244.38,168,6583.525267,0,6583.525267,,,,2015-10-07 08:00,2015-10-27 16:00,,2015-08-15 08:00,2015-09-04 16:00,2015-08-15 08:00,2015-09-04 16:00,2015-08-15 08:00,2015-09-04 16:00,2015-10-07 08:00,2015-10-27 16:00,,PT_Normal,,,,,GiR8ohE7pUKfA0pcX4Vj5g,KcdUiCDW5EaUOR43gkLXyg,,,N,0,0,,,2014-04-05 12:27,2014-04-05 13:21,admin,admin,
96,139839,1749,36340,642,0,N,N,N,CP_Drtn,TT_Task,DT_FixedDUR2,TK_NotStart,BL2-MEP-PL-7F-2020,Water Supply Pipes Pressure Test,4456,472,120,48,0,48,48,48,151.744312,0,151.744312,,,,2015-11-03 08:00,2015-11-08 16:00,,2015-09-05 08:00,2015-09-10 16:00,2015-09-05 08:00,2015-09-10 16:00,2015-09-05 08:00,2015-09-10 16:00,2015-11-03 08:00,2015-11-08 16:00,,PT_Normal,,,,,EvJiODxWu0yR3jrnCFBxvQ,9nkQzXdVekuPPTq+g8W8Fg,,,N,0,0,,,2014-04-05 12:27,2014-04-05 13:21,admin,admin,
97,139840,1749,36340,642,0,N,N,N,CP_Drtn,TT_Task,DT_FixedDUR2,TK_NotStart,BL2-MEP-PL-7F-2040,Drainage Pipes Gravity Test,,264,0,48,0,48,48,48,826.240719,0,826.240719,,,,2015-11-03 08:00,2015-11-08 16:00,,2015-10-01 08:00,2015-10-06 16:00,2015-10-01 08:00,2015-10-06 16:00,2015-10-01 08:00,2015-10-06 16:00,2015-11-03 08:00,2015-11-08 16:00,,PT_Normal,,,,,J+EMIf4Q7kKmpLY9j25K8Q,Rr4YAaLRW0mpoHOj6ENnJw,,,N,0,0,,,2014-04-05 12:27,2014-04-05 13:21,admin,admin,
98,139841,1749,36441,642,0,N,N,N,CP_Drtn,TT_Task,DT_FixedDUR2,TK_NotStart,BL2-MEP-PL-7F-3000,Sanitary Ware Installation Including Connection,,272,0,112,0,383.862,383.862,112,4453.516455,0,4453.516455,,,,2015-12-16 08:00,2015-12-29 16:00,,2015-11-12 08:00,2015-11-25 16:00,2015-11-12 08:00,2015-11-25 16:00,2015-11-12 08:00,2015-11-25 16:00,2015-12-16 08:00,2015-12-29 16:00,,PT_Normal,,,,,Fu0fmtiGSkKoZwgmysqrcg,CEPm0HEXDUOq6WdfLCtMyg,,,N,0,0,,,2014-04-05 12:27,2014-04-05 13:21,admin,admin,
99,139842,1749,36441,642,0,N,N,N,CP_Drtn,TT_Task,DT_FixedDUR2,TK_NotStart,BL2-MEP-PL-7F-3010,Sanitary Ware Accessories Installation,,336,0,48,0,36.45,36.45,48,166.215378,0,166.215378,,,,2016-01-07 08:00,2016-01-12 16:00,,2015-11-26 08:00,2015-12-01 16:00,2015-11-26 08:00,2015-12-01 16:00,2015-11-26 08:00,2015-12-01 16:00,2016-01-07 08:00,2016-01-12 16:00,,PT_Normal,,,,,p+00uJmfzk68bFa8wGk1sw,a/6Jf6vMkUKzc9/kFv1UxA,,,N,0,0,,,2014-04-05 12:27,2014-04-05 13:21,admin,admin,
100,139843,1749,36511,642,0,N,N,N,CP_Drtn,TT_Task,DT_FixedDUR2,TK_NotStart,BL2-MEP-FF-7F-3000,Fire Extinguisher Installation,,592,104,16,0,8,8,16,1076.993507,0,1076.993507,,,,2016-02-09 08:00,2016-02-10 16:00,,2015-11-27 08:00,2015-11-28 16:00,2015-11-27 08:00,2015-11-28 16:00,2015-11-27 08:00,2015-11-28 16:00,2016-02-09 08:00,2016-02-10 16:00,,PT_Normal,,,,,uOanHcESek6la78i+I4xiw,ajPdGPHxzU+bWZVDJNtEgA,,,N,0,0,,,2014-04-05 12:27,2014-04-05 13:21,admin,admin,
101,139844,1749,36511,642,0,N,N,N,CP_Drtn,TT_Task,DT_FixedDUR2,TK_NotStart,BL2-MEP-FF-7F-3010,Hose reel Cabinet Installation and Connection,,792,0,48,0,192,192,48,1336.852298,0,1336.852298,,,,2016-02-01 08:00,2016-02-06 16:00,,2015-10-25 08:00,2015-10-30 16:00,2015-10-25 08:00,2015-10-30 16:00,2015-10-25 08:00,2015-10-30 16:00,2016-02-01 08:00,2016-02-06 16:00,,PT_Normal,,,,,AVms3Z1v70y6hMIkLBlW/g,vg8lWtY3oUis0UpjphjxKw,,,N,0,0,,,2014-04-05 12:27,2014-04-05 13:21,admin,admin,
102,139845,1749,36095,642,0,N,N,N,CP_Drtn,TT_Task,DT_FixedDUR2,TK_NotStart,BL2-MEP-EL-7F-2060,SMDB's  Installation,,1144,64,48,0,45,45,48,4202.598932,0,4202.598932,,,,2016-01-16 08:00,2016-01-21 16:00,,2015-08-26 08:00,2015-08-31 16:00,2015-08-26 08:00,2015-08-31 16:00,2015-08-26 08:00,2015-08-31 16:00,2016-01-16 08:00,2016-01-21 16:00,,PT_Normal,,,,,X+ClSzAznEq4rwFaxm9/xw,eeV7A6AXeUaBRB0bX5CjwA,,,N,0,0,,,2014-04-05 12:27,2014-04-05 13:21,admin,admin,
103,139846,1749,36095,642,0,N,N,N,CP_Drtn,TT_Task,DT_FixedDUR2,TK_NotStart,BL2-MEP-EL-7F-2000,Lighting  Wiring,,624,16,96,0,241.713,241.713,96,3578.08423,0,3578.08423,,,,2015-10-28 08:00,2015-11-08 16:00,,2015-08-11 08:00,2015-08-22 16:00,2015-08-11 08:00,2015-08-22 16:00,2015-08-11 08:00,2015-08-22 16:00,2015-10-28 08:00,2015-11-08 16:00,,PT_Normal,,,,,iZ+RcCr8G0WAKJxdf0yS3g,TQQVQmWB+k+fcreJFTyhuw,,,N,0,0,,,2014-04-05 12:27,2014-04-05 13:21,admin,admin,
104,139847,1749,36095,642,0,N,N,N,CP_Drtn,TT_Task,DT_FixedDUR2,TK_NotStart,BL2-MEP-EL-7F-2010,Power Points Wiring,,624,16,96,0,192,192,96,2906.213289,0,2906.213289,,,,2015-10-28 08:00,2015-11-08 16:00,,2015-08-11 08:00,2015-08-22 16:00,2015-08-11 08:00,2015-08-22 16:00,2015-08-11 08:00,2015-08-22 16:00,2015-10-28 08:00,2015-11-08 16:00,,PT_Normal,,,,,UaFeLLCQbE2V+BS3Nu8fTw,4Fjstp661kalrma9RDIBQA,,,N,0,0,,,2014-04-05 12:27,2014-04-05 13:21,admin,admin,
105,139848,1749,36095,642,0,N,N,N,CP_Drtn,TT_Task,DT_FixedDUR2,TK_NotStart,BL2-MEP-EL-7F-2020,Cable Tray and Trunking Installation,,608,0,112,0,336,336,112,9078.448617,0,9078.448617,,,,2015-10-26 08:00,2015-11-08 16:00,,2015-08-11 08:00,2015-08-24 16:00,2015-08-11 08:00,2015-08-24 16:00,2015-08-11 08:00,2015-08-24 16:00,2015-10-26 08:00,2015-11-08 16:00,,PT_Normal,,,,,R6kE7416x0mrQBuB/Jx+HQ,KXWV3pF9i0qTUR/xcmjxqg,,,N,0,0,,,2014-04-05 12:27,2014-04-05 13:21,admin,admin,
106,139849,1749,36095,642,0,N,N,N,CP_Drtn,TT_Task,DT_FixedDUR2,TK_NotStart,BL2-MEP-EL-7F-2030,Emergency Light Wiring,,656,48,64,0,128,128,64,1210.028798,0,1210.028798,,,,2015-11-01 08:00,2015-11-08 16:00,,2015-08-11 08:00,2015-08-18 16:00,2015-08-11 08:00,2015-08-18 16:00,2015-08-11 08:00,2015-08-18 16:00,2015-11-01 08:00,2015-11-08 16:00,,PT_Normal,,,,,T5b7SW8NN0SGHwHf5+nv0A,wEHyNQd0fkqY090aQzwMjQ,,,N,0,0,,,2014-04-05 12:27,2014-04-05 13:21,admin,admin,
107,139850,1749,36095,642,0,N,N,N,CP_Drtn,TT_Task,DT_FixedDUR2,TK_NotStart,BL2-MEP-EL-7F-2040,Fire Alarm System Wiring,,624,16,96,0,192,192,96,7123.009694,0,7123.009694,,,,2015-10-28 08:00,2015-11-08 16:00,,2015-08-11 08:00,2015-08-22 16:00,2015-08-11 08:00,2015-08-22 16:00,2015-08-11 08:00,2015-08-22 16:00,2015-10-28 08:00,2015-11-08 16:00,,PT_Normal,,,,,jalXkl9QQ0mBXqZZijgxtg,OEM8Vupo+U+NQzWCzwhdtg,,,N,0,0,,,2014-04-05 12:27,2014-04-05 13:21,admin,admin,
108,139851,1749,36095,642,0,N,N,N,CP_Drtn,TT_Task,DT_FixedDUR2,TK_NotStart,BL2-MEP-EL-7F-2070,DB's Installation and Termination,4455,504,0,96,0,288,288,96,4982.925025,0,4982.925025,,,,2015-10-28 08:00,2015-11-08 16:00,,2015-08-26 08:00,2015-09-06 16:00,2015-08-26 08:00,2015-09-06 16:00,2015-08-26 08:00,2015-09-06 16:00,2015-10-28 08:00,2015-11-08 16:00,,PT_Normal,,,,,MLKbhPNNAEqrIZAreTkXlw,yal3oetZ1k6vzTFIrIJMlg,,,N,0,0,,,2014-04-05 12:27,2014-04-05 13:21,admin,admin,
109,139852,1749,36095,642,0,N,N,N,CP_Drtn,TT_Task,DT_FixedDUR2,TK_NotStart,BL2-MEP-EL-7F-2050,Low Current  System Wiring,4455,1192,392,112,0,244,244,112,38231.783306,0,38231.783306,,,,2016-01-07 08:00,2016-01-20 16:00,,2015-08-11 08:00,2015-08-24 16:00,2015-08-11 08:00,2015-08-24 16:00,2015-08-11 08:00,2015-08-24 16:00,2016-01-07 08:00,2016-01-20 16:00,,PT_Normal,,,,,JQu5RhY8o0aBmGwY6/ZUyA,+tLUwXpy80enpWpcICz5ZQ,,,N,0,0,,,2014-04-05 12:27,2014-04-05 13:21,admin,admin,
110,139853,1749,36115,642,0,N,N,N,CP_Drtn,TT_Task,DT_FixedDUR2,TK_NotStart,BL2-MEP-EL-7F-1000,PVC Back Boxes and Conduits  Fixing in Wall,,224,16,96,0,384,384,96,3319.67233,0,3319.67233,,,,2015-07-30 08:00,2015-08-10 16:00,,2015-07-02 08:00,2015-07-13 16:00,2015-07-02 08:00,2015-07-13 16:00,2015-07-02 08:00,2015-07-13 16:00,2015-07-30 08:00,2015-08-10 16:00,,PT_Normal,,,,,ZrTmqtVBYEeOqypV7J+r/w,Kr53xfQivUKWP/oHjRlKlw,,,N,0,0,,,2014-04-05 12:27,2014-04-05 13:21,admin,admin,
111,139854,1749,36115,642,0,N,N,N,CP_Drtn,TT_Task,DT_FixedDUR2,TK_NotStart,BL2-MEP-EL-7F-1010,DB's Inclosure Fixing,4455,312,48,48,0,96,96,48,2136.399392,0,2136.399392,,,,2015-08-19 08:00,2015-08-24 16:00,,2015-07-11 08:00,2015-07-16 16:00,2015-07-11 08:00,2015-07-16 16:00,2015-07-11 08:00,2015-07-16 16:00,2015-08-19 08:00,2015-08-24 16:00,,PT_Normal,,,,,XdghTKWmxEG4kzU4Y1w7Dg,7pPGYDt6sEWoa/f/rfB2nw,,,N,0,0,,,2014-04-05 12:27,2014-04-05 13:21,admin,admin,
112,139855,1749,36197,642,0,N,N,N,CP_Drtn,TT_Task,DT_FixedDUR2,TK_NotStart,BL2-MEP-EL-7F-3020,Lights Fitting Fixing,,680,0,112,0,244,244,112,7336.659378,0,7336.659378,,,,2016-01-06 08:00,2016-01-19 16:00,,2015-10-13 08:00,2015-10-26 16:00,2015-10-13 08:00,2015-10-26 16:00,2015-10-13 08:00,2015-10-26 16:00,2016-01-06 08:00,2016-01-19 16:00,,PT_Normal,,,,,LhNTg4MG4E6V9PL7TXrC+Q,5JW++mtYb0Ob0mG9a9GhYw,,,N,0,0,,,2014-04-05 12:27,2014-04-05 13:21,admin,admin,
113,139856,1749,36197,642,0,N,N,N,CP_Drtn,TT_Task,DT_FixedDUR2,TK_NotStart,BL2-MEP-EL-7F-3070,Sockets and Switches Fixing,,824,48,64,0,128,128,64,1174.957134,0,1174.957134,,,,2016-01-24 08:00,2016-01-31 16:00,,2015-10-13 08:00,2015-10-20 16:00,2015-10-13 08:00,2015-10-20 16:00,2015-10-13 08:00,2015-10-20 16:00,2016-01-24 08:00,2016-01-31 16:00,,PT_Normal,,,,,X3SCLRjp8E6g1iLFROQbMA,QRvIsMApUkS1EHi4pOuaYA,,,N,0,0,,,2014-04-05 12:27,2014-04-05 13:21,admin,admin,
114,139857,1749,36197,642,0,N,N,N,CP_Drtn,TT_Task,DT_FixedDUR2,TK_NotStart,BL2-MEP-EL-7F-3030,Emergency Light Fixing,,880,48,64,0,128,128,64,5722.024623,0,5722.024623,,,,2016-01-31 08:00,2016-02-07 16:00,,2015-10-13 08:00,2015-10-20 16:00,2015-10-13 08:00,2015-10-20 16:00,2015-10-13 08:00,2015-10-20 16:00,2016-01-31 08:00,2016-02-07 16:00,,PT_Normal,,,,,zl/ZlMm//UG2ve5m/FRizQ,EXirn4maxE+ubIbUWIgQLA,,,N,0,0,,,2014-04-05 12:27,2014-04-05 13:21,admin,admin,
115,139858,1749,36197,642,0,N,N,N,CP_Drtn,TT_Task,DT_FixedDUR2,TK_NotStart,BL2-MEP-EL-7F-3040,Fire Alarm System Detector Installation,,728,16,96,0,192,192,96,4046.378277,0,4046.378277,,,,2016-01-12 08:00,2016-01-23 16:00,,2015-10-13 08:00,2015-10-24 16:00,2015-10-13 08:00,2015-10-24 16:00,2015-10-13 08:00,2015-10-24 16:00,2016-01-12 08:00,2016-01-23 16:00,,PT_Normal,,,,,kfMwFnszAUW3E1UPKerKUQ,QR+kPyIbP0iJ2Z+fSQwLlQ,,,N,0,0,,,2014-04-05 12:27,2014-04-05 13:21,admin,admin,
116,139859,1749,36197,642,0,N,N,N,CP_Drtn,TT_Task,DT_FixedDUR2,TK_NotStart,BL2-MEP-EL-7F-3010,SMDB's  Termination and Final Connection,,808,64,48,0,192,192,48,2791.825001,0,2791.825001,,,,2016-01-22 08:00,2016-01-27 16:00,,2015-10-13 08:00,2015-10-18 16:00,2015-10-13 08:00,2015-10-18 16:00,2015-10-13 08:00,2015-10-18 16:00,2016-01-22 08:00,2016-01-27 16:00,,PT_Normal,,,,,ck0hfjlCdUeMldrq9b3oGQ,T+R+8zH6U0qb1Bl4DTNUiQ,,,N,0,0,,,2014-04-05 12:27,2014-04-05 13:21,admin,admin,
117,139860,1749,36095,642,0,N,N,N,CP_Drtn,TT_Task,DT_FixedDUR2,TK_NotStart,BL2-MEP-EL-7F-3000,Power Cable Puling,,856,0,112,0,168,168,112,6375.759893,0,6375.759893,,,,2015-12-23 08:00,2016-01-05 16:00,,2015-09-07 08:00,2015-09-20 16:00,2015-09-07 08:00,2015-09-20 16:00,2015-09-07 08:00,2015-09-20 16:00,2015-12-23 08:00,2016-01-05 16:00,,PT_Normal,,,,,c6meUt9T2UCupyazx/wQFw,l1g9or0f8E2erTgGrpuspQ,,,N,0,0,,,2014-04-05 12:27,2014-04-05 13:21,admin,admin,
118,139861,1749,36197,642,0,N,N,N,CP_Drtn,TT_Task,DT_FixedDUR2,TK_NotStart,BL2-MEP-EL-7F-3050,Despature for Low Current  System Installation,4455,800,0,112,0,336,336,112,72752.164276,0,72752.164276,,,,2016-01-21 08:00,2016-02-03 16:00,,2015-10-13 08:00,2015-10-26 16:00,2015-10-13 08:00,2015-10-26 16:00,2015-10-13 08:00,2015-10-26 16:00,2016-01-21 08:00,2016-02-03 16:00,,PT_Normal,,,,,9OcBy+yL5UOXHFNCmIYkYA,ROTCbh7oUUOzbLubU7nzWA,,,N,0,0,,,2014-04-05 12:27,2014-04-05 13:21,admin,admin,
119,139862,1749,36197,642,0,N,N,N,CP_Drtn,TT_Task,DT_FixedDUR2,TK_NotStart,BL2-MEP-EL-7F-3060,Low Current  System Outlet installation and Connection,4455,800,208,80,0,80,80,80,3870.787498,0,3870.787498,,,,2016-02-04 08:00,2016-02-13 16:00,,2015-10-27 08:00,2015-11-05 16:00,2015-10-27 08:00,2015-11-05 16:00,2015-10-27 08:00,2015-11-05 16:00,2016-02-04 08:00,2016-02-13 16:00,,PT_Normal,,,,,1weZHC1MQU2b61sH3JuKDA,tr01v/85Okuhb/r0Y/WBIQ,,,N,0,0,,,2014-04-05 12:27,2014-04-05 13:21,admin,admin,
120,139863,1749,35641,642,0,N,N,N,CP_Drtn,TT_Task,DT_FixedDUR2,TK_NotStart,BL2-LFT-10,Lift Installation,,1000,1000,480,0,0,0,480,365841.1867,0,365841.1867,,,,2016-02-01 08:00,2016-03-31 16:00,,2015-09-29 08:00,2015-11-27 16:00,2015-09-29 08:00,2015-11-27 16:00,2015-09-29 08:00,2015-11-27 16:00,2016-02-01 08:00,2016-03-31 16:00,,PT_Normal,,,,,ITHkhhsHzUeyKGx6/0C7ug,rGkZF1cG+UWxiD3ue6vQcA,,,N,0,0,,,2014-04-05 12:27,2014-04-05 13:21,admin,admin,
121,139864,1749,36268,642,0,N,N,N,CP_Drtn,TT_Task,DT_FixedDUR2,TK_NotStart,BL2-MEP-EL-1F-2050,SMDB's  Installation,,1832,48,48,0,45,45,48,4202.598932,0,4202.598932,,,,2015-12-11 08:00,2015-12-16 16:00,,2015-04-20 08:00,2015-04-26 16:00,2015-04-20 08:00,2015-04-26 16:00,2015-04-20 08:00,2015-04-26 16:00,2015-12-11 08:00,2015-12-16 16:00,,PT_Normal,,,,,FL08bYkQNE+FBZyAM41jow,uuxZ5z/rQUuoAd2lOc9TYw,,,N,0,0,,,2014-04-05 12:27,2014-04-05 13:21,admin,admin,
122,139865,1749,36268,642,0,N,N,N,CP_Drtn,TT_Task,DT_FixedDUR2,TK_NotStart,BL2-MEP-EL-1F-2000,Lighting  Wiring,,880,0,96,0,241.713,241.713,96,3578.08423,0,3578.08423,,,,2015-07-30 08:00,2015-08-10 16:00,,2015-04-02 08:00,2015-04-15 16:00,2015-04-02 08:00,2015-04-15 16:00,2015-04-02 08:00,2015-04-15 16:00,2015-07-30 08:00,2015-08-10 16:00,,PT_Normal,,,,,2U6A8r0ie0utovKfKKCs5A,i3iDl+KKEEa9/OArlNqF8Q,,,N,0,0,,,2014-04-05 12:27,2014-04-05 13:21,admin,admin,
123,139866,1749,36268,642,0,N,N,N,CP_Drtn,TT_Task,DT_FixedDUR2,TK_NotStart,BL2-MEP-EL-1F-2010,Power Points Wiring,,880,0,96,0,192,192,96,2906.213289,0,2906.213289,,,,2015-07-30 08:00,2015-08-10 16:00,,2015-04-02 08:00,2015-04-15 16:00,2015-04-02 08:00,2015-04-15 16:00,2015-04-02 08:00,2015-04-15 16:00,2015-07-30 08:00,2015-08-10 16:00,,PT_Normal,,,,,vJeUdygJfU61bbiu/6M7xw,cGYvYvhwQkGCLlOgn0B5Og,,,N,0,0,,,2014-04-05 12:27,2014-04-05 13:21,admin,admin,
124,139867,1749,36268,642,0,N,N,N,CP_Drtn,TT_Task,DT_FixedDUR2,TK_NotStart,BL2-MEP-EL-1F-2020,Cable Tray and Trunking Installation,,864,0,112,0,336,336,112,9078.448617,0,9078.448617,,,,2015-07-28 08:00,2015-08-10 16:00,,2015-04-02 08:00,2015-04-18 16:00,2015-04-02 08:00,2015-04-18 16:00,2015-04-02 08:00,2015-04-18 16:00,2015-07-28 08:00,2015-08-10 16:00,,PT_Normal,,,,,vF1OtdUBlUKFtorL+PGBqg,0l4ahISMp06JmbW0rQ7TTw,,,N,0,0,,,2014-04-05 12:27,2014-04-05 13:21,admin,admin,
125,139868,1749,36268,642,0,N,N,N,CP_Drtn,TT_Task,DT_FixedDUR2,TK_NotStart,BL2-MEP-EL-1F-2060,Emergency Light Wiring,,912,32,64,0,128,128,64,1210.028798,0,1210.028798,,,,2015-08-03 08:00,2015-08-10 16:00,,2015-04-02 08:00,2015-04-11 16:00,2015-04-02 08:00,2015-04-11 16:00,2015-04-02 08:00,2015-04-11 16:00,2015-08-03 08:00,2015-08-10 16:00,,PT_Normal,,,,,hAVea3XdUkWr/LMzyqu+PA,vzWDgUe4e0qRZn43OwoRvA,,,N,0,0,,,2014-04-05 12:27,2014-04-05 13:21,admin,admin,
126,139869,1749,36268,642,0,N,N,N,CP_Drtn,TT_Task,DT_FixedDUR2,TK_NotStart,BL2-MEP-EL-1F-2030,Fire Alarm System Wiring,,880,0,96,0,192,192,96,7123.009694,0,7123.009694,,,,2015-07-30 08:00,2015-08-10 16:00,,2015-04-02 08:00,2015-04-15 16:00,2015-04-02 08:00,2015-04-15 16:00,2015-04-02 08:00,2015-04-15 16:00,2015-07-30 08:00,2015-08-10 16:00,,PT_Normal,,,,,nriLl75VTUmVQMzScoydcQ,ewgqxBX29Uem8xoyaWsZWA,,,N,0,0,,,2014-04-05 12:27,2014-04-05 13:21,admin,admin,
127,139870,1749,36268,642,0,N,N,N,CP_Drtn,TT_Task,DT_FixedDUR2,TK_NotStart,BL2-MEP-EL-1F-2070,DB's Installation and Termination,4455,760,0,96,0,288,288,96,4982.925025,0,4982.925025,,,,2015-07-30 08:00,2015-08-10 16:00,,2015-04-20 08:00,2015-05-03 16:00,2015-04-20 08:00,2015-05-03 16:00,2015-04-20 08:00,2015-05-03 16:00,2015-07-30 08:00,2015-08-10 16:00,,PT_Normal,,,,,A5JwgTB7RUmpQCE3iOW05g,YTg2hQeh4kGmPsdZ5s+SGQ,,,N,0,0,,,2014-04-05 12:27,2014-04-05 13:21,admin,admin,
128,139871,1749,36268,642,0,N,N,N,CP_Drtn,TT_Task,DT_FixedDUR2,TK_NotStart,BL2-MEP-EL-1F-2040,Low Current  System Wiring,4455,2072,392,112,0,244,244,112,38231.783306,0,38231.783306,,,,2015-12-26 08:00,2016-01-08 16:00,,2015-04-02 08:00,2015-04-18 16:00,2015-04-02 08:00,2015-04-18 16:00,2015-04-02 08:00,2015-04-18 16:00,2015-12-26 08:00,2016-01-08 16:00,,PT_Normal,,,,,DTZQCnppXkGYgzFCFZpVBQ,hI4J1HkR9UC2rljyZHVfsg,,,N,0,0,,,2014-04-05 12:27,2014-04-05 13:21,admin,admin,
129,139872,1749,36101,642,0,N,N,N,CP_Drtn,TT_Task,DT_FixedDUR2,TK_NotStart,BL2-MEP-EL-1F-1000,PVC Back Boxes and Conduits  Fixing in Wall,,352,0,176,0,384,384,176,3329.67233,0,3329.67233,,,,2015-04-06 08:00,2015-04-30 16:00,,2015-02-14 08:00,2015-03-10 16:00,2015-02-14 08:00,2015-03-10 16:00,2015-02-14 08:00,2015-03-10 16:00,2015-04-06 08:00,2015-04-30 16:00,,PT_Normal,,,,,p36qhC0zzUCdJUDkRG19Pg,5db249hAD0mZ3kurvFehhg,,,N,0,0,,,2014-04-05 12:27,2014-04-05 13:21,admin,admin,
130,139873,1749,36101,642,0,N,N,N,CP_Drtn,TT_Task,DT_FixedDUR2,TK_NotStart,BL2-MEP-EL-1F-1010,DB's Inclosure Fixing,4455,480,128,48,0,96,96,48,2136.399392,0,2136.399392,,,,2015-04-25 08:00,2015-04-30 16:00,,2015-02-14 08:00,2015-02-19 16:00,2015-02-14 08:00,2015-02-19 16:00,2015-02-14 08:00,2015-02-19 16:00,2015-04-25 08:00,2015-04-30 16:00,,PT_Normal,,,,,m4MaCXyR4U+KMVMOgvNq8Q,dwEGNn9m8EGVlDbAwrT+SQ,,,N,0,0,,,2014-04-05 12:27,2014-04-05 13:21,admin,admin,
131,139874,1749,36279,642,0,N,N,N,CP_Drtn,TT_Task,DT_FixedDUR2,TK_NotStart,BL2-MEP-EL-1F-3000,Lights Fitting Fixing,,984,0,112,0,244,244,112,7336.659378,0,7336.659378,,,,2015-10-14 08:00,2015-10-27 16:00,,2015-06-13 08:00,2015-06-26 16:00,2015-06-13 08:00,2015-06-26 16:00,2015-06-13 08:00,2015-06-26 16:00,2015-10-14 08:00,2015-10-27 16:00,,PT_Normal,,,,,Ap7fZ0c/1UWNdAwNM8Oi/w,HmAm+fi7tEq2GnCVYaC9Zg,,,N,0,0,,,2014-04-05 12:27,2014-04-05 13:21,admin,admin,
132,139875,1749,36279,642,0,N,N,N,CP_Drtn,TT_Task,DT_FixedDUR2,TK_NotStart,BL2-MEP-EL-1F-3050,Sockets and Switches Fixing,,1416,32,64,0,128,128,64,1174.957134,0,1174.957134,,,,2015-12-07 08:00,2015-12-14 16:00,,2015-06-13 08:00,2015-06-20 16:00,2015-06-13 08:00,2015-06-20 16:00,2015-06-13 08:00,2015-06-20 16:00,2015-12-07 08:00,2015-12-14 16:00,,PT_Normal,,,,,F+QwMRlbGEuToasju1witw,8iKLa3zLa060XBkJp0iSEQ,,,N,0,0,,,2014-04-05 12:27,2014-04-05 13:21,admin,admin,
133,139876,1749,36279,642,0,N,N,N,CP_Drtn,TT_Task,DT_FixedDUR2,TK_NotStart,BL2-MEP-EL-1F-3010,Emergency Light Fixing,,1472,32,64,0,128,128,64,5722.024623,0,5722.024623,,,,2015-12-14 08:00,2015-12-21 16:00,,2015-06-13 08:00,2015-06-20 16:00,2015-06-13 08:00,2015-06-20 16:00,2015-06-13 08:00,2015-06-20 16:00,2015-12-14 08:00,2015-12-21 16:00,,PT_Normal,,,,,Pc609gW35UiJWl3hktNEpg,nXIGc8+qtkeykD3KyAZGIw,,,N,0,0,,,2014-04-05 12:27,2014-04-05 13:21,admin,admin,
134,139877,1749,36279,642,0,N,N,N,CP_Drtn,TT_Task,DT_FixedDUR2,TK_NotStart,BL2-MEP-EL-1F-3020,Fire Alarm System Detector Installation,,1128,0,96,0,192,192,96,4046.378277,0,4046.378277,,,,2015-11-01 08:00,2015-11-12 16:00,,2015-06-13 08:00,2015-06-24 16:00,2015-06-13 08:00,2015-06-24 16:00,2015-06-13 08:00,2015-06-24 16:00,2015-11-01 08:00,2015-11-12 16:00,,PT_Normal,,,,,O4fEG3mFWEin0kGZPO7dhQ,2W8q3KQCsEehBh8xhcBj4w,,,N,0,0,,,2014-04-05 12:27,2014-04-05 13:21,admin,admin,
135,139878,1749,36279,642,0,N,N,N,CP_Drtn,TT_Task,DT_FixedDUR2,TK_NotStart,BL2-MEP-EL-1F-3070,SMDB's  Termination and Final Connection,,1496,48,48,0,192,192,48,2791.825001,0,2791.825001,,,,2015-12-17 08:00,2015-12-22 16:00,,2015-06-13 08:00,2015-06-18 16:00,2015-06-13 08:00,2015-06-18 16:00,2015-06-13 08:00,2015-06-18 16:00,2015-12-17 08:00,2015-12-22 16:00,,PT_Normal,,,,,zUXh8PEFzEeqe5O10+gWGw,iO7VoDzZA0CBFTaVPTX0gQ,,,N,0,0,,,2014-04-05 12:27,2014-04-05 13:21,admin,admin,
136,139879,1749,36268,642,0,N,N,N,CP_Drtn,TT_Task,DT_FixedDUR2,TK_NotStart,BL2-MEP-EL-1F-3060,Power Cable Puling,,1160,0,112,0,168,168,112,6375.759893,0,6375.759893,,,,2015-09-30 08:00,2015-10-13 16:00,,2015-05-04 08:00,2015-05-19 16:00,2015-05-04 08:00,2015-05-19 16:00,2015-05-04 08:00,2015-05-19 16:00,2015-09-30 08:00,2015-10-13 16:00,,PT_Normal,,,,,ZKT4uZfDk0+Qvo2W0EHZEA,qbwAPDw/8kaWbQc82Q5CsA,,,N,0,0,,,2014-04-05 12:27,2014-04-05 13:21,admin,admin,
137,139880,1749,36279,642,0,N,N,N,CP_Drtn,TT_Task,DT_FixedDUR2,TK_NotStart,BL2-MEP-EL-1F-3030,Despature for Low Current  System Installation,4455,1680,0,112,0,336,336,112,72752.164276,0,72752.164276,,,,2016-01-09 08:00,2016-01-22 16:00,,2015-06-13 08:00,2015-06-26 16:00,2015-06-13 08:00,2015-06-26 16:00,2015-06-13 08:00,2015-06-26 16:00,2016-01-09 08:00,2016-01-22 16:00,,PT_Normal,,,,,whyxS5cXN0GJkY5RenRUPA,Ib4hzYc8UU2uPS4JMlzw5A,,,N,0,0,,,2014-04-05 12:27,2014-04-05 13:21,admin,admin,
138,139881,1749,36279,642,0,N,N,N,CP_Drtn,TT_Task,DT_FixedDUR2,TK_NotStart,BL2-MEP-EL-1F-3040,Low Current  System Outlet installation and Connection,4455,1680,640,80,0,80,80,80,3870.787498,0,3870.787498,,,,2016-01-23 08:00,2016-02-01 16:00,,2015-06-27 08:00,2015-07-06 16:00,2015-06-27 08:00,2015-07-06 16:00,2015-06-27 08:00,2015-07-06 16:00,2016-01-23 08:00,2016-02-01 16:00,,PT_Normal,,,,,w1YjZso6gESbEyNs0RWeFw,n0eFKL4G2UKBbQaH2oDpBw,,,N,0,0,,,2014-04-05 12:27,2014-04-05 13:21,admin,admin,
139,139882,1749,36423,642,0,N,N,N,CP_Drtn,TT_Task,DT_FixedDUR2,TK_NotStart,BL2-MEP-PL-1F-1000,Low Level Water Supply Pipes Installation,,432,80,96,0,42,42,96,725.216846,0,725.216846,,,,2015-04-18 08:00,2015-04-30 16:00,,2015-02-14 08:00,2015-02-26 16:00,2015-02-14 08:00,2015-02-26 16:00,2015-02-14 08:00,2015-02-26 16:00,2015-04-18 08:00,2015-04-30 16:00,,PT_Normal,,,,,FNiufY8xKEKMJ6jtALwGBg,Lfx/veBjrk2+Ph3G3fRwfg,,,N,0,0,,,2014-04-05 12:27,2014-04-05 13:21,admin,admin,
140,139883,1749,36423,642,0,N,N,N,CP_Drtn,TT_Task,DT_FixedDUR2,TK_NotStart,BL2-MEP-PL-1F-1010,Low Level Drainage Pipes Installation,,432,80,96,0,12.67,12.67,96,2291.461713,0,2291.461713,,,,2015-04-18 08:00,2015-04-30 16:00,,2015-02-14 08:00,2015-02-26 16:00,2015-02-14 08:00,2015-02-26 16:00,2015-02-14 08:00,2015-02-26 16:00,2015-04-18 08:00,2015-04-30 16:00,,PT_Normal,,,,,MRXsyxq1rEeg6DLer859jw,A9VkemNYaUe4qappdvOSDQ,,,N,0,0,,,2014-04-05 12:27,2014-04-05 13:21,admin,admin,
141,139884,1749,36423,642,0,N,N,N,CP_Drtn,TT_Task,DT_FixedDUR2,TK_NotStart,BL2-MEP-PL-1F-1020,Supports  installation for High level Pipes,,648,80,96,0,16.352,16.352,96,831.682549,0,831.682549,,,,2015-05-19 08:00,2015-06-01 16:00,,2015-02-14 08:00,2015-02-26 16:00,2015-02-14 08:00,2015-02-26 16:00,2015-02-14 08:00,2015-02-26 16:00,2015-05-19 08:00,2015-06-01 16:00,,PT_Normal,,,,,9yJzBZ4byUuYUd48K271Fg,VlT3gpoC0kGG6N+GiEup7g,,,N,0,0,,,2014-04-05 12:27,2014-04-05 13:21,admin,admin,
142,139885,1749,36533,642,0,N,N,N,CP_Drtn,TT_Task,DT_FixedDUR2,TK_NotStart,BL2-MEP-PL-1F-2030,Floor Drain Installation,,520,0,48,0,6,6,48,554.143324,0,554.143324,,,,2015-07-30 08:00,2015-08-04 16:00,,2015-05-25 08:00,2015-05-31 16:00,2015-05-25 08:00,2015-05-31 16:00,2015-05-25 08:00,2015-05-31 16:00,2015-07-30 08:00,2015-08-04 16:00,,PT_Normal,,,,,z+85G/XlX0uoRSqo/1KGow,02Mxre4bQUO/2DT5HI688Q,,,N,0,0,,,2014-04-05 12:27,2014-04-05 13:21,admin,admin,
143,139886,1749,36533,642,0,N,N,N,CP_Drtn,TT_Task,DT_FixedDUR2,TK_NotStart,BL2-MEP-PL-1F-2000,High Level Water Supply Pipes and Fittings Installation,,424,0,168,0,150.02,150.02,168,1329.597866,0,1329.597866,,,,2015-06-03 08:00,2015-06-23 16:00,,2015-04-02 08:00,2015-04-26 16:00,2015-04-02 08:00,2015-04-26 16:00,2015-04-02 08:00,2015-04-26 16:00,2015-06-03 08:00,2015-06-23 16:00,,PT_Normal,,,,,tqUAdWPiPkelO91LyImb7g,I/U+KWARb0KWi798vttDSg,,,N,0,0,,,2014-04-05 12:27,2014-04-05 13:21,admin,admin,
144,139887,1749,36533,642,0,N,N,N,CP_Drtn,TT_Task,DT_FixedDUR2,TK_NotStart,BL2-MEP-PL-1F-2010,High Level Drainage Pipes Installation,,424,0,168,0,244.38,244.38,168,6583.525267,0,6583.525267,,,,2015-06-03 08:00,2015-06-23 16:00,,2015-04-02 08:00,2015-04-26 16:00,2015-04-02 08:00,2015-04-26 16:00,2015-04-02 08:00,2015-04-26 16:00,2015-06-03 08:00,2015-06-23 16:00,,PT_Normal,,,,,82dUC57Sg0OeFBxcMtzI5Q,93EKlu3jM0qPz03FpZfKiQ,,,N,0,0,,,2014-04-05 12:27,2014-04-05 13:21,admin,admin,
145,139888,1749,36533,642,0,N,N,N,CP_Drtn,TT_Task,DT_FixedDUR2,TK_NotStart,BL2-MEP-PL-1F-2020,Water Supply Pipes Pressure Test,4456,760,120,48,0,48,48,48,151.744312,0,151.744312,,,,2015-08-05 08:00,2015-08-10 16:00,,2015-04-27 08:00,2015-05-03 16:00,2015-04-27 08:00,2015-05-03 16:00,2015-04-27 08:00,2015-05-03 16:00,2015-08-05 08:00,2015-08-10 16:00,,PT_Normal,,,,,UtgsKdo8iUSheptvGyjPFw,DUmrnEKsOkygWtr9SfSKSA,,,N,0,0,,,2014-04-05 12:27,2014-04-05 13:21,admin,admin,
146,139889,1749,36533,642,0,N,N,N,CP_Drtn,TT_Task,DT_FixedDUR2,TK_NotStart,BL2-MEP-PL-1F-2040,Drainage Pipes Gravity Test,,520,0,48,0,48,48,48,826.240719,0,826.240719,,,,2015-08-05 08:00,2015-08-10 16:00,,2015-06-01 08:00,2015-06-06 16:00,2015-06-01 08:00,2015-06-06 16:00,2015-06-01 08:00,2015-06-06 16:00,2015-08-05 08:00,2015-08-10 16:00,,PT_Normal,,,,,nEPi7jUCpUedSqlu6v7tNQ,Ak2qm693rEaRXgFQ5QXmTA,,,N,0,0,,,2014-04-05 12:27,2014-04-05 13:21,admin,admin,
147,139890,1749,36634,642,0,N,N,N,CP_Drtn,TT_Task,DT_FixedDUR2,TK_NotStart,BL2-MEP-PL-1F-3000,Sanitary Ware Installation Including Connection,,576,0,112,0,383.862,383.862,112,4453.516455,0,4453.516455,,,,2015-09-23 08:00,2015-10-06 16:00,,2015-07-13 08:00,2015-07-26 16:00,2015-07-13 08:00,2015-07-26 16:00,2015-07-13 08:00,2015-07-26 16:00,2015-09-23 08:00,2015-10-06 16:00,,PT_Normal,,,,,iEYTMJ+dDUG+7QOmOYILkQ,XI14LKNpwkuPnQvgN6MKgg,,,N,0,0,,,2014-04-05 12:27,2014-04-05 13:21,admin,admin,
148,139891,1749,36634,642,0,N,N,N,CP_Drtn,TT_Task,DT_FixedDUR2,TK_NotStart,BL2-MEP-PL-1F-3010,Sanitary Ware Accessories Installation,,1024,72,48,0,36.45,36.45,48,166.215378,0,166.215378,,,,2015-12-02 08:00,2015-12-07 16:00,,2015-07-27 08:00,2015-08-01 16:00,2015-07-27 08:00,2015-08-01 16:00,2015-07-27 08:00,2015-08-01 16:00,2015-12-02 08:00,2015-12-07 16:00,,PT_Normal,,,,,H7dKDuKeRUGy554Xe0HLHQ,Cddxd4iiPkG/WEUVxgFIUw,,,N,0,0,,,2014-04-05 12:27,2014-04-05 13:21,admin,admin,
149,139892,1749,36427,642,0,N,N,N,CP_Drtn,TT_Task,DT_FixedDUR2,TK_NotStart,BL2-MEP-AC-1F-3000,Grills and Diffusers Fixing,,1192,0,96,0,384,384,96,11550.608192,0,11550.608192,,,,2015-11-09 08:00,2015-11-20 16:00,,2015-06-13 08:00,2015-06-24 16:00,2015-06-13 08:00,2015-06-24 16:00,2015-06-13 08:00,2015-06-24 16:00,2015-11-09 08:00,2015-11-20 16:00,,PT_Normal,,,,,/eDcuBLPDEaReot1Imnvgg,vAv9TL8FAUK5RZpnngpYVw,,,N,0,0,,,2014-04-05 12:27,2014-04-05 13:21,admin,admin,
150,139893,1749,36537,642,0,N,N,N,CP_Drtn,TT_Task,DT_FixedDUR2,TK_NotStart,BL2-MEP-AC-1F-2000,Duct Installation and Insulation,4454,360,0,168,0,263,263,168,4350.939473,0,4350.939473,,,,2015-05-25 08:00,2015-06-15 16:00,,2015-04-02 08:00,2015-04-26 16:00,2015-04-02 08:00,2015-04-26 16:00,2015-04-02 08:00,2015-04-26 16:00,2015-05-25 08:00,2015-06-15 16:00,,PT_Normal,,,,,SeCAlS+rsk6LjfzweQDpyQ,YRILLW7Qj0qOWbp/r1wtvw,,,N,0,0,,,2014-04-05 12:27,2014-04-05 13:21,admin,admin,
151,139894,1749,36537,642,0,N,N,N,CP_Drtn,TT_Task,DT_FixedDUR2,TK_NotStart,BL2-MEP-AC-1F-2030,Duct Accessories Installation,4457,696,56,112,0,448,448,112,666.965527,0,666.965527,,,,2015-07-28 08:00,2015-08-10 16:00,,2015-04-27 08:00,2015-05-12 16:00,2015-04-27 08:00,2015-05-12 16:00,2015-04-27 08:00,2015-05-12 16:00,2015-07-28 08:00,2015-08-10 16:00,,PT_Normal,,,,,2RFbrNr+BkyQLeCp/yUVCg,8JEdMxZVOk+GkEagNSVkSA,,,N,0,0,,,2014-04-05 12:27,2014-04-05 13:21,admin,admin,
152,139895,1749,36537,642,0,N,N,N,CP_Drtn,TT_Task,DT_FixedDUR2,TK_NotStart,BL2-MEP-AC-1F-2020,FCU's Installation,4457,840,32,64,0,96,96,64,6000.055155,0,6000.055155,,,,2015-07-25 08:00,2015-08-01 16:00,,2015-04-02 08:00,2015-04-11 16:00,2015-04-02 08:00,2015-04-11 16:00,2015-04-02 08:00,2015-04-11 16:00,2015-07-25 08:00,2015-08-01 16:00,,PT_Normal,,,,,HPaOMo/Q6EyxhuhkwUspeQ,sJuqYFNOEU2G7X6NQ3Hi8A,,,N,0,0,,,2014-04-05 12:27,2014-04-05 13:21,admin,admin,
153,139896,1749,36537,642,0,N,N,N,CP_Drtn,TT_Task,DT_FixedDUR2,TK_NotStart,BL2-MEP-AC-1F-2010,Chilled Water Pipes and Fittings Installation,4457,352,0,168,0,420,420,168,5251.194852,0,5251.194852,,,,2015-05-24 08:00,2015-06-14 16:00,,2015-04-02 08:00,2015-04-26 16:00,2015-04-02 08:00,2015-04-26 16:00,2015-04-02 08:00,2015-04-26 16:00,2015-05-24 08:00,2015-06-14 16:00,,PT_Normal,,,,,IAkskx4YFEOyEELEBVMJNg,d3bqSQaunUqt8xM/f3Ny5Q,,,N,0,0,,,2014-04-05 12:27,2014-04-05 13:21,admin,admin,
154,139897,1749,36537,642,0,N,N,N,CP_Drtn,TT_Task,DT_FixedDUR2,TK_NotStart,BL2-MEP-AC-1F-2040,Chilled Water Pipes Pressure Test,4457,688,0,48,0,48,48,48,587.116683,0,587.116683,,,,2015-07-27 08:00,2015-08-01 16:00,,2015-04-27 08:00,2015-05-03 16:00,2015-04-27 08:00,2015-05-03 16:00,2015-04-27 08:00,2015-05-03 16:00,2015-07-27 08:00,2015-08-01 16:00,,PT_Normal,,,,,S1G99eqnkEK3KVhhpSqGPw,FhJUcp8JcU+5ibFCEcyD7w,,,N,0,0,,,2014-04-05 12:27,2014-04-05 13:21,admin,admin,
155,139898,1749,36537,642,0,N,N,N,CP_Drtn,TT_Task,DT_FixedDUR2,TK_NotStart,BL2-MEP-AC-1F-2050,Chilled Water Pipes Insulation,4457,1336,72,96,0,192,192,96,1670.208495,0,1670.208495,,,,2015-10-22 08:00,2015-11-02 16:00,,2015-05-04 08:00,2015-05-17 16:00,2015-05-04 08:00,2015-05-17 16:00,2015-05-04 08:00,2015-05-17 16:00,2015-10-22 08:00,2015-11-02 16:00,,PT_Normal,,,,,YuN+/MgjxU2klSxHV9l2Pw,sO8oGEWXSUSxDxioaEh0aA,,,N,0,0,,,2014-04-05 12:27,2014-04-05 13:21,admin,admin,
156,139899,1749,36537,642,0,N,N,N,CP_Drtn,TT_Task,DT_FixedDUR2,TK_NotStart,BL2-MEP-AC-1F-2060,Valve Package Installation,4457,688,0,48,0,48,48,48,2386.490429,0,2386.490429,,,,2015-08-02 08:00,2015-08-07 16:00,,2015-05-04 08:00,2015-05-10 16:00,2015-05-04 08:00,2015-05-10 16:00,2015-05-04 08:00,2015-05-10 16:00,2015-08-02 08:00,2015-08-07 16:00,,PT_Normal,,,,,KW4/r3HRnU+up4GSzEMktQ,iIz35cOr6EuWNRSJor4Zyg,,,N,0,0,,,2014-04-05 12:27,2014-04-05 13:21,admin,admin,
157,139900,1749,36537,642,0,N,N,N,CP_Drtn,TT_Task,DT_FixedDUR2,TK_NotStart,BL2-MEP-AC-1F-2070,FCU's Drain Pipes Installation,4457,688,144,24,0,24,24,24,519.927167,0,519.927167,,,,2015-08-08 08:00,2015-08-10 16:00,,2015-05-11 08:00,2015-05-13 16:00,2015-05-11 08:00,2015-05-13 16:00,2015-05-11 08:00,2015-05-13 16:00,2015-08-08 08:00,2015-08-10 16:00,,PT_Normal,,,,,3bPCGL9b50C6VX5H5k3Fqw,+HTdXPPjPke5EXbByp+ZTw,,,N,0,0,,,2014-04-05 12:27,2014-04-05 13:21,admin,admin,
158,139901,1749,36429,642,0,N,N,N,CP_Drtn,TT_Task,DT_FixedDUR2,TK_NotStart,BL2-MEP-AC-1F-1000,Supports and Hungers Fixing,,656,152,96,0,192,192,96,338.467259,0,338.467259,,,,2015-05-10 08:00,2015-05-23 16:00,,2015-02-03 08:00,2015-02-16 16:00,2015-02-03 08:00,2015-02-16 16:00,2015-02-03 08:00,2015-02-16 16:00,2015-05-10 08:00,2015-05-23 16:00,,PT_Normal,,,,,DVhXjESWvkK6GQEXqaenQQ,pTxXdYpZrkix08juhRWCjw,,,N,0,0,,,2014-04-05 12:27,2014-04-05 13:21,admin,admin,
159,139902,1749,36431,642,0,N,N,N,CP_Drtn,TT_Task,DT_FixedDUR2,TK_NotStart,BL2-MEP-FF-1F-3000,Fire Extinguisher Installation,,1040,32,16,0,8,8,16,1076.993507,0,1076.993507,,,,2016-01-28 08:00,2016-01-29 16:00,,2015-09-20 08:00,2015-09-21 16:00,2015-09-20 08:00,2015-09-21 16:00,2015-09-20 08:00,2015-09-21 16:00,2016-01-28 08:00,2016-01-29 16:00,,PT_Normal,,,,,F6+JFCQf9ECybt4tJyhz6Q,TN2rtqnZAUmzFWPOawOqaw,,,N,0,0,,,2014-04-05 12:27,2014-04-05 13:21,admin,admin,
160,139903,1749,36431,642,0,N,N,N,CP_Drtn,TT_Task,DT_FixedDUR2,TK_NotStart,BL2-MEP-FF-1F-3010,Hose reel Cabinet Installation and Connection,,792,0,48,0,192,192,48,1336.852298,0,1336.852298,,,,2015-12-27 08:00,2016-01-01 16:00,,2015-09-19 08:00,2015-09-24 16:00,2015-09-19 08:00,2015-09-24 16:00,2015-09-19 08:00,2015-09-24 16:00,2015-12-27 08:00,2016-01-01 16:00,,PT_Normal,,,,,x/kUlm5yPUCOzfbOI4CKKA,xUFn6A3y5U217n94KVhPfQ,,,N,0,0,,,2014-04-05 12:27,2014-04-05 13:21,admin,admin,
161,139904,1749,36447,642,0,N,N,N,CP_Drtn,TT_Task,DT_FixedDUR2,TK_NotStart,BL2-MEP-PL-2F-1000,Low Level Water Supply Pipes Installation,,424,0,96,0,42,42,96,725.216846,0,725.216846,,,,2015-05-12 08:00,2015-05-25 16:00,,2015-03-11 08:00,2015-03-24 16:00,2015-03-11 08:00,2015-03-24 16:00,2015-03-11 08:00,2015-03-24 16:00,2015-05-12 08:00,2015-05-25 16:00,,PT_Normal,,,,,F1tKH3FTckur0kakPiPDEg,WLXR7+noo0Sr6dQ4rYdAzg,,,N,0,0,,,2014-04-05 12:27,2014-04-05 13:21,admin,admin,
162,139905,1749,36447,642,0,N,N,N,CP_Drtn,TT_Task,DT_FixedDUR2,TK_NotStart,BL2-MEP-PL-2F-1010,Low Level Drainage Pipes Installation,,424,0,96,0,12.67,12.67,96,2291.461713,0,2291.461713,,,,2015-05-12 08:00,2015-05-25 16:00,,2015-03-11 08:00,2015-03-24 16:00,2015-03-11 08:00,2015-03-24 16:00,2015-03-11 08:00,2015-03-24 16:00,2015-05-12 08:00,2015-05-25 16:00,,PT_Normal,,,,,2HWvHhAJBU2r1ei3PR7XAA,vPR6eiPk+EWMvCLrUZ3vqg,,,N,0,0,,,2014-04-05 12:27,2014-04-05 13:21,admin,admin,
163,139906,1749,36447,642,0,N,N,N,CP_Drtn,TT_Task,DT_FixedDUR2,TK_NotStart,BL2-MEP-PL-2F-1020,Supports  installation for High level Pipes,,568,80,96,0,16.352,16.352,96,831.682549,0,831.682549,,,,2015-06-02 08:00,2015-06-13 16:00,,2015-03-11 08:00,2015-03-24 16:00,2015-03-11 08:00,2015-03-24 16:00,2015-03-11 08:00,2015-03-24 16:00,2015-06-02 08:00,2015-06-13 16:00,,PT_Normal,,,,,RfGKHtjHRkyC2mAeuNSGyw,LQ6YFi6OY02RVzoP7eJ6QQ,,,N,0,0,,,2014-04-05 12:27,2014-04-05 13:21,admin,admin,
164,139907,1749,36380,642,0,N,N,N,CP_Drtn,TT_Task,DT_FixedDUR2,TK_NotStart,BL2-MEP-PL-2F-2030,Floor Drain Installation,,544,0,48,0,6,6,48,554.143324,0,554.143324,,,,2015-08-14 08:00,2015-08-19 16:00,,2015-06-07 08:00,2015-06-12 16:00,2015-06-07 08:00,2015-06-12 16:00,2015-06-07 08:00,2015-06-12 16:00,2015-08-14 08:00,2015-08-19 16:00,,PT_Normal,,,,,RVhtJxNjQEm1rWIpNLLSWQ,CsEPgduj4Eub1TwXO8Decw,,,N,0,0,,,2014-04-05 12:27,2014-04-05 13:21,admin,admin,
165,139908,1749,36380,642,0,N,N,N,CP_Drtn,TT_Task,DT_FixedDUR2,TK_NotStart,BL2-MEP-PL-2F-2000,High Level Water Supply Pipes and Fittings Installation,,424,0,168,0,150.02,150.02,168,1329.597866,0,1329.597866,,,,2015-06-24 08:00,2015-07-14 16:00,,2015-04-27 08:00,2015-05-20 16:00,2015-04-27 08:00,2015-05-20 16:00,2015-04-27 08:00,2015-05-20 16:00,2015-06-24 08:00,2015-07-14 16:00,,PT_Normal,,,,,K0l38m2ATk62SrMUlI1f/A,8wAfEfqe5E6GvFDztYhgXA,,,N,0,0,,,2014-04-05 12:27,2014-04-05 13:21,admin,admin,
166,139909,1749,36380,642,0,N,N,N,CP_Drtn,TT_Task,DT_FixedDUR2,TK_NotStart,BL2-MEP-PL-2F-2010,High Level Drainage Pipes Installation,,424,0,168,0,244.38,244.38,168,6583.525267,0,6583.525267,,,,2015-06-24 08:00,2015-07-14 16:00,,2015-04-27 08:00,2015-05-20 16:00,2015-04-27 08:00,2015-05-20 16:00,2015-04-27 08:00,2015-05-20 16:00,2015-06-24 08:00,2015-07-14 16:00,,PT_Normal,,,,,8RUmPjrG7Uy8sj/nIDH5pA,JXm3ce9hgEqwckFrgVSKaA,,,N,0,0,,,2014-04-05 12:27,2014-04-05 13:21,admin,admin,
167,139910,1749,36380,642,0,N,N,N,CP_Drtn,TT_Task,DT_FixedDUR2,TK_NotStart,BL2-MEP-PL-2F-2020,Water Supply Pipes Pressure Test,4456,712,120,48,0,48,48,48,151.744312,0,151.744312,,,,2015-08-20 08:00,2015-08-25 16:00,,2015-05-21 08:00,2015-05-27 16:00,2015-05-21 08:00,2015-05-27 16:00,2015-05-21 08:00,2015-05-27 16:00,2015-08-20 08:00,2015-08-25 16:00,,PT_Normal,,,,,advbHd2K7EGWTrF2Do0Sng,O8eYfZ6e/ESVUVR8uTo1qw,,,N,0,0,,,2014-04-05 12:27,2014-04-05 13:21,admin,admin,
168,139911,1749,36380,642,0,N,N,N,CP_Drtn,TT_Task,DT_FixedDUR2,TK_NotStart,BL2-MEP-PL-2F-2040,Drainage Pipes Gravity Test,,544,0,48,0,48,48,48,826.240719,0,826.240719,,,,2015-08-20 08:00,2015-08-25 16:00,,2015-06-13 08:00,2015-06-18 16:00,2015-06-13 08:00,2015-06-18 16:00,2015-06-13 08:00,2015-06-18 16:00,2015-08-20 08:00,2015-08-25 16:00,,PT_Normal,,,,,CWNPeB2zuE6mtClbyLQ8Jw,VAghX8mWV06YFAQP8u0Y7A,,,N,0,0,,,2014-04-05 12:27,2014-04-05 13:21,admin,admin,
169,139912,1749,36381,642,0,N,N,N,CP_Drtn,TT_Task,DT_FixedDUR2,TK_NotStart,BL2-MEP-PL-2F-3000,Sanitary Ware Installation Including Connection,,568,0,112,0,383.862,383.862,112,4453.516455,0,4453.516455,,,,2015-10-07 08:00,2015-10-20 16:00,,2015-07-28 08:00,2015-08-10 16:00,2015-07-28 08:00,2015-08-10 16:00,2015-07-28 08:00,2015-08-10 16:00,2015-10-07 08:00,2015-10-20 16:00,,PT_Normal,,,,,6ar/hJ8cKEqnjOz1QBtYOQ,mHFMLhvigUKnczxLVYPqaQ,,,N,0,0,,,2014-04-05 12:27,2014-04-05 13:21,admin,admin,
170,139913,1749,36381,642,0,N,N,N,CP_Drtn,TT_Task,DT_FixedDUR2,TK_NotStart,BL2-MEP-PL-2F-3010,Sanitary Ware Accessories Installation,,952,104,48,0,36.45,36.45,48,166.215378,0,166.215378,,,,2015-12-08 08:00,2015-12-13 16:00,,2015-08-11 08:00,2015-08-16 16:00,2015-08-11 08:00,2015-08-16 16:00,2015-08-11 08:00,2015-08-16 16:00,2015-12-08 08:00,2015-12-13 16:00,,PT_Normal,,,,,Sz5LLQUodkWgthqIietcZw,qmvGfaPJnkicQxB2ugGVKQ,,,N,0,0,,,2014-04-05 12:27,2014-04-05 13:21,admin,admin,
171,139914,1749,36342,642,0,N,N,N,CP_Drtn,TT_Task,DT_FixedDUR2,TK_NotStart,BL2-MEP-AC-2F-1000,Supports and Hungers Fixing,,576,80,96,0,192,192,96,338.467259,0,338.467259,,,,2015-06-03 08:00,2015-06-14 16:00,,2015-03-11 08:00,2015-03-24 16:00,2015-03-11 08:00,2015-03-24 16:00,2015-03-11 08:00,2015-03-24 16:00,2015-06-03 08:00,2015-06-14 16:00,,PT_Normal,,,,,4DuoPeSe20qY0QoJ0m8I3Q,jNstX0O5SUShElFxgq/sag,,,N,0,0,,,2014-04-05 12:27,2014-04-05 13:21,admin,admin,
172,139915,1749,36335,642,0,N,N,N,CP_Drtn,TT_Task,DT_FixedDUR2,TK_NotStart,BL2-MEP-AC-2F-2000,Duct Installation and Insulation,4454,360,0,168,0,263,263,168,4350.939473,0,4350.939473,,,,2015-06-16 08:00,2015-07-06 16:00,,2015-04-27 08:00,2015-05-20 16:00,2015-04-27 08:00,2015-05-20 16:00,2015-04-27 08:00,2015-05-20 16:00,2015-06-16 08:00,2015-07-06 16:00,,PT_Normal,,,,,XNkzTnnRX0yvvDCzfJ0dnQ,css81H6ZyESnYzhsvMNc4w,,,N,0,0,,,2014-04-05 12:27,2014-04-05 13:21,admin,admin,
173,139916,1749,36335,642,0,N,N,N,CP_Drtn,TT_Task,DT_FixedDUR2,TK_NotStart,BL2-MEP-AC-2F-2030,Duct Accessories Installation,4457,648,56,112,0,448,448,112,666.965527,0,666.965527,,,,2015-08-12 08:00,2015-08-25 16:00,,2015-05-21 08:00,2015-06-05 16:00,2015-05-21 08:00,2015-06-05 16:00,2015-05-21 08:00,2015-06-05 16:00,2015-08-12 08:00,2015-08-25 16:00,,PT_Normal,,,,,ARgWIvTLK0mXcwp4C5EiuA,2Y2mUZuyoEinlVJ10Ovm1Q,,,N,0,0,,,2014-04-05 12:27,2014-04-05 13:21,admin,admin,
174,139917,1749,36335,642,0,N,N,N,CP_Drtn,TT_Task,DT_FixedDUR2,TK_NotStart,BL2-MEP-AC-2F-2020,FCU's Installation,4457,864,112,64,0,96,96,64,6000.055155,0,6000.055155,,,,2015-08-09 08:00,2015-08-16 16:00,,2015-04-16 08:00,2015-04-25 16:00,2015-04-16 08:00,2015-04-25 16:00,2015-04-16 08:00,2015-04-25 16:00,2015-08-09 08:00,2015-08-16 16:00,,PT_Normal,,,,,t4LnGy7XJUWAwKanpVeJOg,Xh/He4X4PEqTZZo4m4N0Xw,,,N,0,0,,,2014-04-05 12:27,2014-04-05 13:21,admin,admin,
175,139918,1749,36335,642,0,N,N,N,CP_Drtn,TT_Task,DT_FixedDUR2,TK_NotStart,BL2-MEP-AC-2F-2010,Chilled Water Pipes and Fittings Installation,4457,352,0,168,0,420,420,168,5251.194852,0,5251.194852,,,,2015-06-15 08:00,2015-07-05 16:00,,2015-04-27 08:00,2015-05-20 16:00,2015-04-27 08:00,2015-05-20 16:00,2015-04-27 08:00,2015-05-20 16:00,2015-06-15 08:00,2015-07-05 16:00,,PT_Normal,,,,,cFlkaHhSU0yCb9krN5m/gg,8tZLsyien0C3+AFCpF2tfg,,,N,0,0,,,2014-04-05 12:27,2014-04-05 13:21,admin,admin,
176,139919,1749,36335,642,0,N,N,N,CP_Drtn,TT_Task,DT_FixedDUR2,TK_NotStart,BL2-MEP-AC-2F-2040,Chilled Water Pipes Pressure Test,4457,640,0,48,0,48,48,48,587.116683,0,587.116683,,,,2015-08-11 08:00,2015-08-16 16:00,,2015-05-21 08:00,2015-05-27 16:00,2015-05-21 08:00,2015-05-27 16:00,2015-05-21 08:00,2015-05-27 16:00,2015-08-11 08:00,2015-08-16 16:00,,PT_Normal,,,,,vwRonVKYU0+kDNWGA+Q/Hg,Q1QihXdy+kO2Hyn10311fg,,,N,0,0,,,2014-04-05 12:27,2014-04-05 13:21,admin,admin,
177,139920,1749,36335,642,0,N,N,N,CP_Drtn,TT_Task,DT_FixedDUR2,TK_NotStart,BL2-MEP-AC-2F-2050,Chilled Water Pipes Insulation,4457,1264,72,96,0,192,192,96,1670.208495,0,1670.208495,,,,2015-11-03 08:00,2015-11-14 16:00,,2015-05-28 08:00,2015-06-09 16:00,2015-05-28 08:00,2015-06-09 16:00,2015-05-28 08:00,2015-06-09 16:00,2015-11-03 08:00,2015-11-14 16:00,,PT_Normal,,,,,uWYY0WDlgUGSo8q6FdJHLw,4+cvxG56jUSA2SsClMQXuw,,,N,0,0,,,2014-04-05 12:27,2014-04-05 13:21,admin,admin,
178,139921,1749,36335,642,0,N,N,N,CP_Drtn,TT_Task,DT_FixedDUR2,TK_NotStart,BL2-MEP-AC-2F-2060,Valve Package Installation,4457,640,0,48,0,48,48,48,2386.490429,0,2386.490429,,,,2015-08-17 08:00,2015-08-22 16:00,,2015-05-28 08:00,2015-06-03 16:00,2015-05-28 08:00,2015-06-03 16:00,2015-05-28 08:00,2015-06-03 16:00,2015-08-17 08:00,2015-08-22 16:00,,PT_Normal,,,,,6+K9TzVUmkakKWdPBWKvCg,peoEHNKs50m8DEowLEMnjg,,,N,0,0,,,2014-04-05 12:27,2014-04-05 13:21,admin,admin,
179,139922,1749,36335,642,0,N,N,N,CP_Drtn,TT_Task,DT_FixedDUR2,TK_NotStart,BL2-MEP-AC-2F-2070,FCU's Drain Pipes Installation,4457,640,96,24,0,24,24,24,519.927167,0,519.927167,,,,2015-08-23 08:00,2015-08-25 16:00,,2015-06-04 08:00,2015-06-06 16:00,2015-06-04 08:00,2015-06-06 16:00,2015-06-04 08:00,2015-06-06 16:00,2015-08-23 08:00,2015-08-25 16:00,,PT_Normal,,,,,K40Dxqz2FUKKpex27x+wtw,xmOfXilSgUGzjH8vErSXOA,,,N,0,0,,,2014-04-05 12:27,2014-04-05 13:21,admin,admin,
180,139923,1749,36353,642,0,N,N,N,CP_Drtn,TT_Task,DT_FixedDUR2,TK_NotStart,BL2-MEP-AC-2F-3000,Grills and Diffusers Fixing,,1192,80,96,0,384,384,96,11550.608192,0,11550.608192,,,,2015-11-21 08:00,2015-12-02 16:00,,2015-06-25 08:00,2015-07-06 16:00,2015-06-25 08:00,2015-07-06 16:00,2015-06-25 08:00,2015-07-06 16:00,2015-11-21 08:00,2015-12-02 16:00,,PT_Normal,,,,,17gwkVc7gUuYSB7E+VJO+A,8Ix2ApxbR0ibFH1kAo89nA,,,N,0,0,,,2014-04-05 12:27,2014-04-05 13:21,admin,admin,
181,139924,1749,36455,642,0,N,N,N,CP_Drtn,TT_Task,DT_FixedDUR2,TK_NotStart,BL2-MEP-FF-2F-3000,Fire Extinguisher Installation,,1008,32,16,0,8,8,16,1076.993507,0,1076.993507,,,,2016-01-30 08:00,2016-01-31 16:00,,2015-09-26 08:00,2015-09-27 16:00,2015-09-26 08:00,2015-09-27 16:00,2015-09-26 08:00,2015-09-27 16:00,2016-01-30 08:00,2016-01-31 16:00,,PT_Normal,,,,,Czis7twQQEiiej7btDgnpQ,GLRtGm/B7kW5sEoN+4rP0w,,,N,0,0,,,2014-04-05 12:27,2014-04-05 13:21,admin,admin,
182,139925,1749,36455,642,0,N,N,N,CP_Drtn,TT_Task,DT_FixedDUR2,TK_NotStart,BL2-MEP-FF-2F-3010,Hose reel Cabinet Installation and Connection,,792,0,48,0,192,192,48,1336.852298,0,1336.852298,,,,2016-01-02 08:00,2016-01-07 16:00,,2015-09-25 08:00,2015-09-30 16:00,2015-09-25 08:00,2015-09-30 16:00,2015-09-25 08:00,2015-09-30 16:00,2016-01-02 08:00,2016-01-07 16:00,,PT_Normal,,,,,2jpFcYfeEkGI5lqzSSH+Gw,98C5NJvifEKirgTozaaipw,,,N,0,0,,,2014-04-05 12:27,2014-04-05 13:21,admin,admin,
183,139926,1749,36139,642,0,N,N,N,CP_Drtn,TT_Task,DT_FixedDUR2,TK_NotStart,BL2-MEP-EL-2F-1000,PVC Back Boxes and Conduits  Fixing in Wall,,424,0,96,0,384,384,96,3319.67233,0,3319.67233,,,,2015-05-12 08:00,2015-05-25 16:00,,2015-03-11 08:00,2015-03-24 16:00,2015-03-11 08:00,2015-03-24 16:00,2015-03-11 08:00,2015-03-24 16:00,2015-05-12 08:00,2015-05-25 16:00,,PT_Normal,,,,,4lM8HBE5TEmcWzM1WvQ9qg,ihClkbpRbU2vXuGiFp2HsA,,,N,0,0,,,2014-04-05 12:27,2014-04-05 13:21,admin,admin,
184,139927,1749,36139,642,0,N,N,N,CP_Drtn,TT_Task,DT_FixedDUR2,TK_NotStart,BL2-MEP-EL-2F-1010,DB's Inclosure Fixing,4455,472,48,48,0,96,96,48,2136.399392,0,2136.399392,,,,2015-05-19 08:00,2015-05-25 16:00,,2015-03-11 08:00,2015-03-17 16:00,2015-03-11 08:00,2015-03-17 16:00,2015-03-11 08:00,2015-03-17 16:00,2015-05-19 08:00,2015-05-25 16:00,,PT_Normal,,,,,Vr+fsDv6IU+QISK5EKePrA,OpIJdXCgykON2izmr44zTg,,,N,0,0,,,2014-04-05 12:27,2014-04-05 13:21,admin,admin,
185,139928,1749,36140,642,0,N,N,N,CP_Drtn,TT_Task,DT_FixedDUR2,TK_NotStart,BL2-MEP-EL-2F-3000,Lights Fitting Fixing,,984,48,112,0,244,244,112,7336.659378,0,7336.659378,,,,2015-10-28 08:00,2015-11-10 16:00,,2015-06-27 08:00,2015-07-10 16:00,2015-06-27 08:00,2015-07-10 16:00,2015-06-27 08:00,2015-07-10 16:00,2015-10-28 08:00,2015-11-10 16:00,,PT_Normal,,,,,N/U2Tw3PYEuOjLjQ2gnEAw,GTcChd/N9US+9EkKCzrFig,,,N,0,0,,,2014-04-05 12:27,2014-04-05 13:21,admin,admin,
186,139929,1749,36140,642,0,N,N,N,CP_Drtn,TT_Task,DT_FixedDUR2,TK_NotStart,BL2-MEP-EL-2F-3060,Sockets and Switches Fixing,,1384,112,64,0,128,128,64,1174.957134,0,1174.957134,,,,2015-12-15 08:00,2015-12-22 16:00,,2015-06-25 08:00,2015-07-02 16:00,2015-06-25 08:00,2015-07-02 16:00,2015-06-25 08:00,2015-07-02 16:00,2015-12-15 08:00,2015-12-22 16:00,,PT_Normal,,,,,hBB28NRZ+UKcQGfZD/iuRA,IDcI+VV8dUuuLg7arD6+ew,,,N,0,0,,,2014-04-05 12:27,2014-04-05 13:21,admin,admin,
187,139930,1749,36140,642,0,N,N,N,CP_Drtn,TT_Task,DT_FixedDUR2,TK_NotStart,BL2-MEP-EL-2F-3010,Emergency Light Fixing,,1440,112,64,0,128,128,64,5722.024623,0,5722.024623,,,,2015-12-22 08:00,2015-12-29 16:00,,2015-06-25 08:00,2015-07-02 16:00,2015-06-25 08:00,2015-07-02 16:00,2015-06-25 08:00,2015-07-02 16:00,2015-12-22 08:00,2015-12-29 16:00,,PT_Normal,,,,,EiFFpr62OkC3QWgFQJdThQ,Ftkumfdm1kuCN85G7lko9g,,,N,0,0,,,2014-04-05 12:27,2014-04-05 13:21,admin,admin,
188,139931,1749,36140,642,0,N,N,N,CP_Drtn,TT_Task,DT_FixedDUR2,TK_NotStart,BL2-MEP-EL-2F-3020,Fire Alarm System Detector Installation,,1128,80,96,0,192,192,96,4046.378277,0,4046.378277,,,,2015-11-13 08:00,2015-11-24 16:00,,2015-06-25 08:00,2015-07-06 16:00,2015-06-25 08:00,2015-07-06 16:00,2015-06-25 08:00,2015-07-06 16:00,2015-11-13 08:00,2015-11-24 16:00,,PT_Normal,,,,,Vk3SCXdG9Euk2gdzxZ5Ffw,UcDI4MfrFEui3Tygk1wwvA,,,N,0,0,,,2014-04-05 12:27,2014-04-05 13:21,admin,admin,
189,139932,1749,36140,642,0,N,N,N,CP_Drtn,TT_Task,DT_FixedDUR2,TK_NotStart,BL2-MEP-EL-2F-3070,SMDB's  Termination and Final Connection,,1448,128,48,0,192,192,48,2791.825001,0,2791.825001,,,,2015-12-23 08:00,2015-12-28 16:00,,2015-06-25 08:00,2015-06-30 16:00,2015-06-25 08:00,2015-06-30 16:00,2015-06-25 08:00,2015-06-30 16:00,2015-12-23 08:00,2015-12-28 16:00,,PT_Normal,,,,,ju7//UcgG0+e8O3eMB9M5A,XSDkpxpoyUO35XIeYKZ0+w,,,N,0,0,,,2014-04-05 12:27,2014-04-05 13:21,admin,admin,
190,139933,1749,36073,642,0,N,N,N,CP_Drtn,TT_Task,DT_FixedDUR2,TK_NotStart,BL2-MEP-EL-2F-3050,Power Cable Puling,,1160,48,112,0,168,168,112,6375.759893,0,6375.759893,,,,2015-10-14 08:00,2015-10-27 16:00,,2015-05-20 08:00,2015-06-04 16:00,2015-05-20 08:00,2015-06-04 16:00,2015-05-20 08:00,2015-06-04 16:00,2015-10-14 08:00,2015-10-27 16:00,,PT_Normal,,,,,PCQDQPGrQEGpGBX44GLJjg,ypFUf8W/WUib1k0yrv0sXg,,,N,0,0,,,2014-04-05 12:27,2014-04-05 13:21,admin,admin,
191,139934,1749,36140,642,0,N,N,N,CP_Drtn,TT_Task,DT_FixedDUR2,TK_NotStart,BL2-MEP-EL-2F-3030,Despature for Low Current  System Installation,4455,1600,0,112,0,336,336,112,72752.164276,0,72752.164276,,,,2016-01-11 08:00,2016-01-24 16:00,,2015-06-25 08:00,2015-07-08 16:00,2015-06-25 08:00,2015-07-08 16:00,2015-06-25 08:00,2015-07-08 16:00,2016-01-11 08:00,2016-01-24 16:00,,PT_Normal,,,,,FbshbzGRSky5QJw6iGI6YA,0nMfeXM/40KQPSpJhHwHxA,,,N,0,0,,,2014-04-05 12:27,2014-04-05 13:21,admin,admin,
192,139935,1749,36140,642,0,N,N,N,CP_Drtn,TT_Task,DT_FixedDUR2,TK_NotStart,BL2-MEP-EL-2F-3040,Low Current  System Outlet installation and Connection,4455,1600,592,80,0,80,80,80,3870.787498,0,3870.787498,,,,2016-01-25 08:00,2016-02-03 16:00,,2015-07-09 08:00,2015-07-18 16:00,2015-07-09 08:00,2015-07-18 16:00,2015-07-09 08:00,2015-07-18 16:00,2016-01-25 08:00,2016-02-03 16:00,,PT_Normal,,,,,m1SEx0ogBEWfr1XEUxIzvw,tUksV0O1vk+AlzgsPqPI7g,,,N,0,0,,,2014-04-05 12:27,2014-04-05 13:21,admin,admin,
193,139936,1749,36073,642,0,N,N,N,CP_Drtn,TT_Task,DT_FixedDUR2,TK_NotStart,BL2-MEP-EL-2F-2050,SMDB's  Installation,,1784,128,48,0,45,45,48,4202.598932,0,4202.598932,,,,2015-12-17 08:00,2015-12-22 16:00,,2015-05-04 08:00,2015-05-10 16:00,2015-05-04 08:00,2015-05-10 16:00,2015-05-04 08:00,2015-05-10 16:00,2015-12-17 08:00,2015-12-22 16:00,,PT_Normal,,,,,QF8NOHz6u0uU1be1SoziyQ,m9b2u+oW/02qPdfsAweKyQ,,,N,0,0,,,2014-04-05 12:27,2014-04-05 13:21,admin,admin,
194,139937,1749,36073,642,0,N,N,N,CP_Drtn,TT_Task,DT_FixedDUR2,TK_NotStart,BL2-MEP-EL-2F-2000,Lighting  Wiring,,904,80,96,0,241.713,241.713,96,3578.08423,0,3578.08423,,,,2015-08-14 08:00,2015-08-25 16:00,,2015-04-16 08:00,2015-04-29 16:00,2015-04-16 08:00,2015-04-29 16:00,2015-04-16 08:00,2015-04-29 16:00,2015-08-14 08:00,2015-08-25 16:00,,PT_Normal,,,,,ZgFoyZ8tZ0yHZ456Bn9s2g,WHc8oSKH8Uq5kOgvfjYgKA,,,N,0,0,,,2014-04-05 12:27,2014-04-05 13:21,admin,admin,
195,139938,1749,36073,642,0,N,N,N,CP_Drtn,TT_Task,DT_FixedDUR2,TK_NotStart,BL2-MEP-EL-2F-2010,Power Points Wiring,,904,80,96,0,192,192,96,2906.213289,0,2906.213289,,,,2015-08-14 08:00,2015-08-25 16:00,,2015-04-16 08:00,2015-04-29 16:00,2015-04-16 08:00,2015-04-29 16:00,2015-04-16 08:00,2015-04-29 16:00,2015-08-14 08:00,2015-08-25 16:00,,PT_Normal,,,,,CFRBHvb7X0e6SRw6ZreGBw,h6Zma+1Ea02U3ig3DuBQGA,,,N,0,0,,,2014-04-05 12:27,2014-04-05 13:21,admin,admin,
196,139939,1749,36073,642,0,N,N,N,CP_Drtn,TT_Task,DT_FixedDUR2,TK_NotStart,BL2-MEP-EL-2F-2020,Cable Tray and Trunking Installation,,872,48,112,0,336,336,112,9078.448617,0,9078.448617,,,,2015-08-12 08:00,2015-08-25 16:00,,2015-04-19 08:00,2015-05-04 16:00,2015-04-19 08:00,2015-05-04 16:00,2015-04-19 08:00,2015-05-04 16:00,2015-08-12 08:00,2015-08-25 16:00,,PT_Normal,,,,,Guu3StpuxESVtBA7TYRW2g,yjtDJvoVtUiWJ8gkhpHFHA,,,N,0,0,,,2014-04-05 12:27,2014-04-05 13:21,admin,admin,
197,139940,1749,36073,642,0,N,N,N,CP_Drtn,TT_Task,DT_FixedDUR2,TK_NotStart,BL2-MEP-EL-2F-2060,Emergency Light Wiring,,936,112,64,0,128,128,64,1210.028798,0,1210.028798,,,,2015-08-18 08:00,2015-08-25 16:00,,2015-04-16 08:00,2015-04-25 16:00,2015-04-16 08:00,2015-04-25 16:00,2015-04-16 08:00,2015-04-25 16:00,2015-08-18 08:00,2015-08-25 16:00,,PT_Normal,,,,,2HMzYtcvRE2HxC1CTaqHig,SfTfl0HU1kGMLEqCsTwgzg,,,N,0,0,,,2014-04-05 12:27,2014-04-05 13:21,admin,admin,
198,139941,1749,36073,642,0,N,N,N,CP_Drtn,TT_Task,DT_FixedDUR2,TK_NotStart,BL2-MEP-EL-2F-2030,Fire Alarm System Wiring,,904,80,96,0,192,192,96,7123.009694,0,7123.009694,,,,2015-08-14 08:00,2015-08-25 16:00,,2015-04-16 08:00,2015-04-29 16:00,2015-04-16 08:00,2015-04-29 16:00,2015-04-16 08:00,2015-04-29 16:00,2015-08-14 08:00,2015-08-25 16:00,,PT_Normal,,,,,SvIH4U3j4Emj0Qq2afnMoA,UXh0nlgPHUumKWHtuOq8Ew,,,N,0,0,,,2014-04-05 12:27,2014-04-05 13:21,admin,admin,
199,139942,1749,36073,642,0,N,N,N,CP_Drtn,TT_Task,DT_FixedDUR2,TK_NotStart,BL2-MEP-EL-2F-2070,DB's Installation and Termination,4455,784,16,96,0,288,288,96,4982.925025,0,4982.925025,,,,2015-08-14 08:00,2015-08-25 16:00,,2015-05-04 08:00,2015-05-17 16:00,2015-05-04 08:00,2015-05-17 16:00,2015-05-04 08:00,2015-05-17 16:00,2015-08-14 08:00,2015-08-25 16:00,,PT_Normal,,,,,trMNoZ5z6keXJ8JRdMIkjg,3WoqTZByfkSckE7hJU4sCg,,,N,0,0,,,2014-04-05 12:27,2014-04-05 13:21,admin,admin,
200,139943,1749,36073,642,0,N,N,N,CP_Drtn,TT_Task,DT_FixedDUR2,TK_NotStart,BL2-MEP-EL-2F-2040,Low Current  System Wiring,4455,1992,392,112,0,244,244,112,38231.783306,0,38231.783306,,,,2015-12-28 08:00,2016-01-10 16:00,,2015-04-16 08:00,2015-05-02 16:00,2015-04-16 08:00,2015-05-02 16:00,2015-04-16 08:00,2015-05-02 16:00,2015-12-28 08:00,2016-01-10 16:00,,PT_Normal,,,,,fSJ60l4+r0SBiPpJ4hLwzg,F0VbABrIDUygo6iA4/bAkw,,,N,0,0,,,2014-04-05 12:27,2014-04-05 13:21,admin,admin,
201,139944,1749,36327,642,0,N,N,N,CP_Drtn,TT_Task,DT_FixedDUR2,TK_NotStart,BL2-MEP-FF-3F-3000,Fire Extinguisher Installation,,976,32,16,0,8,8,16,1076.993507,0,1076.993507,,,,2016-02-01 08:00,2016-02-02 16:00,,2015-10-02 08:00,2015-10-03 16:00,2015-10-02 08:00,2015-10-03 16:00,2015-10-02 08:00,2015-10-03 16:00,2016-02-01 08:00,2016-02-02 16:00,,PT_Normal,,,,,iRb5Lm7o50ibUzxuQEanzQ,dmrH6oa6m0KPK+/XNrSXJg,,,N,0,0,,,2014-04-05 12:27,2014-04-05 13:21,admin,admin,
202,139945,1749,36327,642,0,N,N,N,CP_Drtn,TT_Task,DT_FixedDUR2,TK_NotStart,BL2-MEP-FF-3F-3010,Hose reel Cabinet Installation and Connection,,792,0,48,0,192,192,48,1336.852298,0,1336.852298,,,,2016-01-08 08:00,2016-01-13 16:00,,2015-10-01 08:00,2015-10-06 16:00,2015-10-01 08:00,2015-10-06 16:00,2015-10-01 08:00,2015-10-06 16:00,2016-01-08 08:00,2016-01-13 16:00,,PT_Normal,,,,,kkBfa6+yTUeBVZlkXh+FAg,8XLiSOXegk6DfwXisfERMg,,,N,0,0,,,2014-04-05 12:27,2014-04-05 13:21,admin,admin,
203,139946,1749,36459,642,0,N,N,N,CP_Drtn,TT_Task,DT_FixedDUR2,TK_NotStart,BL2-MEP-AC-3F-2000,Duct Installation and Insulation,4454,360,0,168,0,263,263,168,4350.939473,0,4350.939473,,,,2015-07-07 08:00,2015-07-27 16:00,,2015-05-21 08:00,2015-06-12 16:00,2015-05-21 08:00,2015-06-12 16:00,2015-05-21 08:00,2015-06-12 16:00,2015-07-07 08:00,2015-07-27 16:00,,PT_Normal,,,,,93lnnB21/UyqcvH2iwPU2g,WxTlY7eyj0a3w2eBkSD/BQ,,,N,0,0,,,2014-04-05 12:27,2014-04-05 13:21,admin,admin,
204,139947,1749,36459,642,0,N,N,N,CP_Drtn,TT_Task,DT_FixedDUR2,TK_NotStart,BL2-MEP-AC-3F-2030,Duct Accessories Installation,4457,600,56,112,0,448,448,112,666.965527,0,666.965527,,,,2015-08-27 08:00,2015-09-09 16:00,,2015-06-13 08:00,2015-06-26 16:00,2015-06-13 08:00,2015-06-26 16:00,2015-06-13 08:00,2015-06-26 16:00,2015-08-27 08:00,2015-09-09 16:00,,PT_Normal,,,,,GnHLw+omYE6BCr9d34+0sg,DsMJYBETckil2XIbNNX8tg,,,N,0,0,,,2014-04-05 12:27,2014-04-05 13:21,admin,admin,
205,139948,1749,36459,642,0,N,N,N,CP_Drtn,TT_Task,DT_FixedDUR2,TK_NotStart,BL2-MEP-AC-3F-2010,FCU's Installation,4457,808,112,64,0,96,96,64,6000.055155,0,6000.055155,,,,2015-08-24 08:00,2015-08-31 16:00,,2015-05-12 08:00,2015-05-20 16:00,2015-05-12 08:00,2015-05-20 16:00,2015-05-12 08:00,2015-05-20 16:00,2015-08-24 08:00,2015-08-31 16:00,,PT_Normal,,,,,VKDjZwl7gEC9HfsB0a8n9Q,9LDQBzBJtE2K+rb/SYujRg,,,N,0,0,,,2014-04-05 12:27,2014-04-05 13:21,admin,admin,
206,139949,1749,36459,642,0,N,N,N,CP_Drtn,TT_Task,DT_FixedDUR2,TK_NotStart,BL2-MEP-AC-3F-2020,Chilled Water Pipes and Fittings Installation,4457,352,0,168,0,420,420,168,5251.194852,0,5251.194852,,,,2015-07-06 08:00,2015-07-26 16:00,,2015-05-21 08:00,2015-06-12 16:00,2015-05-21 08:00,2015-06-12 16:00,2015-05-21 08:00,2015-06-12 16:00,2015-07-06 08:00,2015-07-26 16:00,,PT_Normal,,,,,RNcQ29mdCUqbCh7YuLzCHA,J0+qgeH4/EeAaG1iAiVEQA,,,N,0,0,,,2014-04-05 12:27,2014-04-05 13:21,admin,admin,
207,139950,1749,36459,642,0,N,N,N,CP_Drtn,TT_Task,DT_FixedDUR2,TK_NotStart,BL2-MEP-AC-3F-2040,Chilled Water Pipes Pressure Test,4457,592,0,48,0,48,48,48,587.116683,0,587.116683,,,,2015-08-26 08:00,2015-08-31 16:00,,2015-06-13 08:00,2015-06-18 16:00,2015-06-13 08:00,2015-06-18 16:00,2015-06-13 08:00,2015-06-18 16:00,2015-08-26 08:00,2015-08-31 16:00,,PT_Normal,,,,,WyZ+EYLHXkGTj9pNUqb1dA,Mla/c9Tr/E+pIkQxyaZgwA,,,N,0,0,,,2014-04-05 12:27,2014-04-05 13:21,admin,admin,
208,139951,1749,36459,642,0,N,N,N,CP_Drtn,TT_Task,DT_FixedDUR2,TK_NotStart,BL2-MEP-AC-3F-2050,Chilled Water Pipes Insulation,4457,1192,72,96,0,192,192,96,1670.208495,0,1670.208495,,,,2015-11-15 08:00,2015-11-26 16:00,,2015-06-19 08:00,2015-06-30 16:00,2015-06-19 08:00,2015-06-30 16:00,2015-06-19 08:00,2015-06-30 16:00,2015-11-15 08:00,2015-11-26 16:00,,PT_Normal,,,,,F6mxegtnGE26k3I0hjctog,xz9iwziXA0uXkpKzUnPLsg,,,N,0,0,,,2014-04-05 12:27,2014-04-05 13:21,admin,admin,
209,139952,1749,36459,642,0,N,N,N,CP_Drtn,TT_Task,DT_FixedDUR2,TK_NotStart,BL2-MEP-AC-3F-2060,Valve Package Installation,4457,592,0,48,0,48,48,48,2386.490429,0,2386.490429,,,,2015-09-01 08:00,2015-09-06 16:00,,2015-06-19 08:00,2015-06-24 16:00,2015-06-19 08:00,2015-06-24 16:00,2015-06-19 08:00,2015-06-24 16:00,2015-09-01 08:00,2015-09-06 16:00,,PT_Normal,,,,,JpO6RzVwGE+gMWCWj6c8zg,5TkGTxOsHUiVygNtPPei2w,,,N,0,0,,,2014-04-05 12:27,2014-04-05 13:21,admin,admin,
210,139953,1749,36459,642,0,N,N,N,CP_Drtn,TT_Task,DT_FixedDUR2,TK_NotStart,BL2-MEP-AC-3F-2070,FCU's Drain Pipes Installation,4457,592,104,24,0,24,24,24,519.927167,0,519.927167,,,,2015-09-07 08:00,2015-09-09 16:00,,2015-06-25 08:00,2015-06-27 16:00,2015-06-25 08:00,2015-06-27 16:00,2015-06-25 08:00,2015-06-27 16:00,2015-09-07 08:00,2015-09-09 16:00,,PT_Normal,,,,,F1dr8JiJ60KtDJ0lgZGkgA,0mYYDCdJX0m10uuYYUZpoQ,,,N,0,0,,,2014-04-05 12:27,2014-04-05 13:21,admin,admin,
211,139954,1749,36374,642,0,N,N,N,CP_Drtn,TT_Task,DT_FixedDUR2,TK_NotStart,BL2-MEP-AC-3F-3000,Grills and Diffusers Fixing,,1112,80,96,0,384,384,96,11550.608192,0,11550.608192,,,,2015-12-03 08:00,2015-12-14 16:00,,2015-07-17 08:00,2015-07-28 16:00,2015-07-17 08:00,2015-07-28 16:00,2015-07-17 08:00,2015-07-28 16:00,2015-12-03 08:00,2015-12-14 16:00,,PT_Normal,,,,,zixrhuLn/Eqndf8d0VWdFw,N8zx/63NCU+lF/qnwiIt8A,,,N,0,0,,,2014-04-05 12:27,2014-04-05 13:21,admin,admin,
212,139955,1749,36350,642,0,N,N,N,CP_Drtn,TT_Task,DT_FixedDUR2,TK_NotStart,BL2-MEP-AC-3F-1000,Supports and Hungers Fixing,,568,80,96,0,192,192,96,338.467259,0,338.467259,,,,2015-06-24 08:00,2015-07-05 16:00,,2015-04-06 08:00,2015-04-19 16:00,2015-04-06 08:00,2015-04-19 16:00,2015-04-06 08:00,2015-04-19 16:00,2015-06-24 08:00,2015-07-05 16:00,,PT_Normal,,,,,Ca3kiiSquUWPCNYAb6J7jg,icm/Dd4x2UqDk/0b6o2kjg,,,N,0,0,,,2014-04-05 12:27,2014-04-05 13:21,admin,admin,
213,139956,1749,36404,642,0,N,N,N,CP_Drtn,TT_Task,DT_FixedDUR2,TK_NotStart,BL2-MEP-PL-3F-3000,Sanitary Ware Installation Including Connection,,528,0,112,0,383.862,383.862,112,4453.516455,0,4453.516455,,,,2015-10-21 08:00,2015-11-03 16:00,,2015-08-16 08:00,2015-08-29 16:00,2015-08-16 08:00,2015-08-29 16:00,2015-08-16 08:00,2015-08-29 16:00,2015-10-21 08:00,2015-11-03 16:00,,PT_Normal,,,,,29CbXrrutEiiwRw7giqUVA,3FMSqZ03BkGHWrfph6odEg,,,N,0,0,,,2014-04-05 12:27,2014-04-05 13:21,admin,admin,
214,139957,1749,36404,642,0,N,N,N,CP_Drtn,TT_Task,DT_FixedDUR2,TK_NotStart,BL2-MEP-PL-3F-3010,Sanitary Ware Accessories Installation,,848,128,48,0,36.45,36.45,48,166.215378,0,166.215378,,,,2015-12-14 08:00,2015-12-19 16:00,,2015-08-30 08:00,2015-09-04 16:00,2015-08-30 08:00,2015-09-04 16:00,2015-08-30 08:00,2015-09-04 16:00,2015-12-14 08:00,2015-12-19 16:00,,PT_Normal,,,,,pbzXC19uuEO8MqZzp+6NPw,TTaipdCY0kq2LNj6p9e0UQ,,,N,0,0,,,2014-04-05 12:27,2014-04-05 13:21,admin,admin,
215,139958,1749,36343,642,0,N,N,N,CP_Drtn,TT_Task,DT_FixedDUR2,TK_NotStart,BL2-MEP-PL-3F-2030,Floor Drain Installation,,488,0,48,0,6,6,48,554.143324,0,554.143324,,,,2015-08-29 08:00,2015-09-03 16:00,,2015-06-29 08:00,2015-07-04 16:00,2015-06-29 08:00,2015-07-04 16:00,2015-06-29 08:00,2015-07-04 16:00,2015-08-29 08:00,2015-09-03 16:00,,PT_Normal,,,,,UlwkHRj02U+6zH8IJGAStQ,UnG75eFqXkeYu5wXj0LBMA,,,N,0,0,,,2014-04-05 12:27,2014-04-05 13:21,admin,admin,
216,139959,1749,36343,642,0,N,N,N,CP_Drtn,TT_Task,DT_FixedDUR2,TK_NotStart,BL2-MEP-PL-3F-2000,High Level Water Supply Pipes and Fittings Installation,,424,0,168,0,150.02,150.02,168,1329.597866,0,1329.597866,,,,2015-07-15 08:00,2015-08-04 16:00,,2015-05-21 08:00,2015-06-12 16:00,2015-05-21 08:00,2015-06-12 16:00,2015-05-21 08:00,2015-06-12 16:00,2015-07-15 08:00,2015-08-04 16:00,,PT_Normal,,,,,hFtdirYo2EK0yvL1EOJ0nQ,XmgfmKerfUG8Kdv1kF6APQ,,,N,0,0,,,2014-04-05 12:27,2014-04-05 13:21,admin,admin,
217,139960,1749,36343,642,0,N,N,N,CP_Drtn,TT_Task,DT_FixedDUR2,TK_NotStart,BL2-MEP-PL-3F-2010,High Level Drainage Pipes Installation,,424,0,168,0,244.38,244.38,168,6583.525267,0,6583.525267,,,,2015-07-15 08:00,2015-08-04 16:00,,2015-05-21 08:00,2015-06-12 16:00,2015-05-21 08:00,2015-06-12 16:00,2015-05-21 08:00,2015-06-12 16:00,2015-07-15 08:00,2015-08-04 16:00,,PT_Normal,,,,,TQI5T/d/FUimFS5XlKvlWw,aolrvhBzqUK6Gq9XYKFKCw,,,N,0,0,,,2014-04-05 12:27,2014-04-05 13:21,admin,admin,
218,139961,1749,36343,642,0,N,N,N,CP_Drtn,TT_Task,DT_FixedDUR2,TK_NotStart,BL2-MEP-PL-3F-2020,Water Supply Pipes Pressure Test,4456,664,120,48,0,48,48,48,151.744312,0,151.744312,,,,2015-09-04 08:00,2015-09-09 16:00,,2015-06-13 08:00,2015-06-18 16:00,2015-06-13 08:00,2015-06-18 16:00,2015-06-13 08:00,2015-06-18 16:00,2015-09-04 08:00,2015-09-09 16:00,,PT_Normal,,,,,FNIYZZQNSEeZ5lxb6ZCyJg,Jj2Gez7CrEevMIcrgsS+NA,,,N,0,0,,,2014-04-05 12:27,2014-04-05 13:21,admin,admin,
219,139962,1749,36343,642,0,N,N,N,CP_Drtn,TT_Task,DT_FixedDUR2,TK_NotStart,BL2-MEP-PL-3F-2040,Drainage Pipes Gravity Test,,488,0,48,0,48,48,48,826.240719,0,826.240719,,,,2015-09-04 08:00,2015-09-09 16:00,,2015-07-05 08:00,2015-07-10 16:00,2015-07-05 08:00,2015-07-10 16:00,2015-07-05 08:00,2015-07-10 16:00,2015-09-04 08:00,2015-09-09 16:00,,PT_Normal,,,,,PmCGMoiuUku03aRewB35fw,1V6L/UcfLEKayaL5bh+jzw,,,N,0,0,,,2014-04-05 12:27,2014-04-05 13:21,admin,admin,
220,139963,1749,36338,642,0,N,N,N,CP_Drtn,TT_Task,DT_FixedDUR2,TK_NotStart,BL2-MEP-PL-3F-1000,Low Level Water Supply Pipes Installation,,416,0,96,0,42,42,96,725.216846,0,725.216846,,,,2015-06-05 08:00,2015-06-16 16:00,,2015-04-06 08:00,2015-04-19 16:00,2015-04-06 08:00,2015-04-19 16:00,2015-04-06 08:00,2015-04-19 16:00,2015-06-05 08:00,2015-06-16 16:00,,PT_Normal,,,,,Gpgep64sEUyqii7ytn1rdw,733nMbl49kWHxSS+SuAURw,,,N,0,0,,,2014-04-05 12:27,2014-04-05 13:21,admin,admin,
221,139964,1749,36338,642,0,N,N,N,CP_Drtn,TT_Task,DT_FixedDUR2,TK_NotStart,BL2-MEP-PL-3F-1010,Low Level Drainage Pipes Installation,,416,0,96,0,12.67,12.67,96,2291.461713,0,2291.461713,,,,2015-06-05 08:00,2015-06-16 16:00,,2015-04-06 08:00,2015-04-19 16:00,2015-04-06 08:00,2015-04-19 16:00,2015-04-06 08:00,2015-04-19 16:00,2015-06-05 08:00,2015-06-16 16:00,,PT_Normal,,,,,w/AKGSwCEUGHYzvMFhw1og,HA9VZMtZCECDmnfvasCvhA,,,N,0,0,,,2014-04-05 12:27,2014-04-05 13:21,admin,admin,
222,139965,1749,36338,642,0,N,N,N,CP_Drtn,TT_Task,DT_FixedDUR2,TK_NotStart,BL2-MEP-PL-3F-1020,Supports  installation for High level Pipes,,488,80,96,0,16.352,16.352,96,831.682549,0,831.682549,,,,2015-06-14 08:00,2015-06-25 16:00,,2015-04-06 08:00,2015-04-19 16:00,2015-04-06 08:00,2015-04-19 16:00,2015-04-06 08:00,2015-04-19 16:00,2015-06-14 08:00,2015-06-25 16:00,,PT_Normal,,,,,NPhyJ4SYoE2vWsx4asZ0Lw,un9xbFVvM0G+B6/TBIoOpg,,,N,0,0,,,2014-04-05 12:27,2014-04-05 13:21,admin,admin,
223,139966,1749,36087,642,0,N,N,N,CP_Drtn,TT_Task,DT_FixedDUR2,TK_NotStart,BL2-MEP-EL-3F-1000,PVC Back Boxes and Conduits  Fixing in Wall,,488,72,96,0,384,384,96,3319.67233,0,3319.67233,,,,2015-06-05 08:00,2015-06-16 16:00,,2015-03-26 08:00,2015-04-08 16:00,2015-03-26 08:00,2015-04-08 16:00,2015-03-26 08:00,2015-04-08 16:00,2015-06-05 08:00,2015-06-16 16:00,,PT_Normal,,,,,kn54EY2G+EeJ87WcTGvoMg,ByhP8lakAE6cfPfCsOLFfw,,,N,0,0,,,2014-04-05 12:27,2014-04-05 13:21,admin,admin,
224,139967,1749,36087,642,0,N,N,N,CP_Drtn,TT_Task,DT_FixedDUR2,TK_NotStart,BL2-MEP-EL-3F-1010,DB's Inclosure Fixing,4455,464,48,48,0,96,96,48,2136.399392,0,2136.399392,,,,2015-06-11 08:00,2015-06-16 16:00,,2015-04-06 08:00,2015-04-12 16:00,2015-04-06 08:00,2015-04-12 16:00,2015-04-06 08:00,2015-04-12 16:00,2015-06-11 08:00,2015-06-16 16:00,,PT_Normal,,,,,2CiEGNTHK0eLUDQYuFkCFg,dCAyPSjgJUmgWTiSoxLCnQ,,,N,0,0,,,2014-04-05 12:27,2014-04-05 13:21,admin,admin,
225,139968,1749,36060,642,0,N,N,N,CP_Drtn,TT_Task,DT_FixedDUR2,TK_NotStart,BL2-MEP-EL-3F-2060,SMDB's  Installation,,1656,128,48,0,45,45,48,4202.598932,0,4202.598932,,,,2015-12-23 08:00,2015-12-28 16:00,,2015-05-30 08:00,2015-06-04 16:00,2015-05-30 08:00,2015-06-04 16:00,2015-05-30 08:00,2015-06-04 16:00,2015-12-23 08:00,2015-12-28 16:00,,PT_Normal,,,,,NgKbRhohvEO4+IKFxecGLg,LRPPTS6DOkOj1TEpzI5Rgg,,,N,0,0,,,2014-04-05 12:27,2014-04-05 13:21,admin,admin,
226,139969,1749,36060,642,0,N,N,N,CP_Drtn,TT_Task,DT_FixedDUR2,TK_NotStart,BL2-MEP-EL-3F-2000,Lighting  Wiring,,848,80,96,0,241.713,241.713,96,3578.08423,0,3578.08423,,,,2015-08-29 08:00,2015-09-09 16:00,,2015-05-12 08:00,2015-05-25 16:00,2015-05-12 08:00,2015-05-25 16:00,2015-05-12 08:00,2015-05-25 16:00,2015-08-29 08:00,2015-09-09 16:00,,PT_Normal,,,,,s4mpZXWzS0Kq3BJHKH68+A,HxB8Hnhr30aUgwwcq1Se4w,,,N,0,0,,,2014-04-05 12:27,2014-04-05 13:21,admin,admin,
227,139970,1749,36060,642,0,N,N,N,CP_Drtn,TT_Task,DT_FixedDUR2,TK_NotStart,BL2-MEP-EL-3F-2010,Power Points Wiring,,848,80,96,0,192,192,96,2906.213289,0,2906.213289,,,,2015-08-29 08:00,2015-09-09 16:00,,2015-05-12 08:00,2015-05-25 16:00,2015-05-12 08:00,2015-05-25 16:00,2015-05-12 08:00,2015-05-25 16:00,2015-08-29 08:00,2015-09-09 16:00,,PT_Normal,,,,,7FNBdisECkqiOeC4O4sFnQ,BaEYpwCRA0CxWPXNBSt4CA,,,N,0,0,,,2014-04-05 12:27,2014-04-05 13:21,admin,admin,
228,139971,1749,36060,642,0,N,N,N,CP_Drtn,TT_Task,DT_FixedDUR2,TK_NotStart,BL2-MEP-EL-3F-2020,Cable Tray and Trunking Installation,,832,64,112,0,336,336,112,9078.448617,0,9078.448617,,,,2015-08-27 08:00,2015-09-09 16:00,,2015-05-12 08:00,2015-05-27 16:00,2015-05-12 08:00,2015-05-27 16:00,2015-05-12 08:00,2015-05-27 16:00,2015-08-27 08:00,2015-09-09 16:00,,PT_Normal,,,,,qCyfqZXY7EOgxD555HKl6Q,UY+HSQmRKEKvrp2BDLBZJQ,,,N,0,0,,,2014-04-05 12:27,2014-04-05 13:21,admin,admin,
229,139972,1749,36060,642,0,N,N,N,CP_Drtn,TT_Task,DT_FixedDUR2,TK_NotStart,BL2-MEP-EL-3F-2030,Emergency Light Wiring,,880,112,64,0,128,128,64,1210.028798,0,1210.028798,,,,2015-09-02 08:00,2015-09-09 16:00,,2015-05-12 08:00,2015-05-20 16:00,2015-05-12 08:00,2015-05-20 16:00,2015-05-12 08:00,2015-05-20 16:00,2015-09-02 08:00,2015-09-09 16:00,,PT_Normal,,,,,1EZIZcMyY0emAOUzAuYeKQ,nVfgNy5xHEWdA5V+uxXltw,,,N,0,0,,,2014-04-05 12:27,2014-04-05 13:21,admin,admin,
230,139973,1749,36060,642,0,N,N,N,CP_Drtn,TT_Task,DT_FixedDUR2,TK_NotStart,BL2-MEP-EL-3F-2040,Fire Alarm System Wiring,,848,80,96,0,192,192,96,7123.009694,0,7123.009694,,,,2015-08-29 08:00,2015-09-09 16:00,,2015-05-12 08:00,2015-05-25 16:00,2015-05-12 08:00,2015-05-25 16:00,2015-05-12 08:00,2015-05-25 16:00,2015-08-29 08:00,2015-09-09 16:00,,PT_Normal,,,,,OvM8d8mZFE6XQUhE57Z/GA,tZ7psf38LEimjwbpHKDL+Q,,,N,0,0,,,2014-04-05 12:27,2014-04-05 13:21,admin,admin,
231,139974,1749,36060,642,0,N,N,N,CP_Drtn,TT_Task,DT_FixedDUR2,TK_NotStart,BL2-MEP-EL-3F-2070,DB's Installation and Termination,4455,728,0,96,0,288,288,96,4982.925025,0,4982.925025,,,,2015-08-29 08:00,2015-09-09 16:00,,2015-05-30 08:00,2015-06-10 16:00,2015-05-30 08:00,2015-06-10 16:00,2015-05-30 08:00,2015-06-10 16:00,2015-08-29 08:00,2015-09-09 16:00,,PT_Normal,,,,,UaXRSqwvokOICVA7zzN2/g,x3rngGgUIk6hetrjlK0qZg,,,N,0,0,,,2014-04-05 12:27,2014-04-05 13:21,admin,admin,
232,139975,1749,36060,642,0,N,N,N,CP_Drtn,TT_Task,DT_FixedDUR2,TK_NotStart,BL2-MEP-EL-3F-2050,Low Current  System Wiring,4455,1832,392,112,0,244,244,112,38231.783306,0,38231.783306,,,,2015-12-30 08:00,2016-01-12 16:00,,2015-05-12 08:00,2015-05-27 16:00,2015-05-12 08:00,2015-05-27 16:00,2015-05-12 08:00,2015-05-27 16:00,2015-12-30 08:00,2016-01-12 16:00,,PT_Normal,,,,,3kvxTxtxE0WCtkWncglMKQ,09GEmr7SQkefD3lvfoCZ0Q,,,N,0,0,,,2014-04-05 12:27,2014-04-05 13:21,admin,admin,
233,139976,1749,36160,642,0,N,N,N,CP_Drtn,TT_Task,DT_FixedDUR2,TK_NotStart,BL2-MEP-EL-3F-3000,Lights Fitting Fixing,,936,64,112,0,244,244,112,7336.659378,0,7336.659378,,,,2015-11-11 08:00,2015-11-24 16:00,,2015-07-17 08:00,2015-07-30 16:00,2015-07-17 08:00,2015-07-30 16:00,2015-07-17 08:00,2015-07-30 16:00,2015-11-11 08:00,2015-11-24 16:00,,PT_Normal,,,,,RldVL2Eki0e/xCexT5PUJA,OoBziN86skOLqRPHFKBV2A,,,N,0,0,,,2014-04-05 12:27,2014-04-05 13:21,admin,admin,
234,139977,1749,36160,642,0,N,N,N,CP_Drtn,TT_Task,DT_FixedDUR2,TK_NotStart,BL2-MEP-EL-3F-3060,Sockets and Switches Fixing,,1272,112,64,0,128,128,64,1174.957134,0,1174.957134,,,,2015-12-23 08:00,2015-12-30 16:00,,2015-07-17 08:00,2015-07-24 16:00,2015-07-17 08:00,2015-07-24 16:00,2015-07-17 08:00,2015-07-24 16:00,2015-12-23 08:00,2015-12-30 16:00,,PT_Normal,,,,,yAsQJX/vXUqx4hdB21KxEg,DrpnCMToK0aEEOPLwyhqXQ,,,N,0,0,,,2014-04-05 12:27,2014-04-05 13:21,admin,admin,
235,139978,1749,36160,642,0,N,N,N,CP_Drtn,TT_Task,DT_FixedDUR2,TK_NotStart,BL2-MEP-EL-3F-3010,Emergency Light Fixing,,1328,112,64,0,128,128,64,5722.024623,0,5722.024623,,,,2015-12-30 08:00,2016-01-06 16:00,,2015-07-17 08:00,2015-07-24 16:00,2015-07-17 08:00,2015-07-24 16:00,2015-07-17 08:00,2015-07-24 16:00,2015-12-30 08:00,2016-01-06 16:00,,PT_Normal,,,,,MlRJGrfL8UGxwcRxWGgkiA,4ggsHe9+vEqRuhKgcpzgYA,,,N,0,0,,,2014-04-05 12:27,2014-04-05 13:21,admin,admin,
236,139979,1749,36160,642,0,N,N,N,CP_Drtn,TT_Task,DT_FixedDUR2,TK_NotStart,BL2-MEP-EL-3F-3020,Fire Alarm System Detector Installation,,1048,80,96,0,192,192,96,4046.378277,0,4046.378277,,,,2015-11-25 08:00,2015-12-06 16:00,,2015-07-17 08:00,2015-07-28 16:00,2015-07-17 08:00,2015-07-28 16:00,2015-07-17 08:00,2015-07-28 16:00,2015-11-25 08:00,2015-12-06 16:00,,PT_Normal,,,,,ygQQyJDDlUyqZWhJPAeFhw,q15GdYVb5EWtxJoQGYydTQ,,,N,0,0,,,2014-04-05 12:27,2014-04-05 13:21,admin,admin,
237,139980,1749,36160,642,0,N,N,N,CP_Drtn,TT_Task,DT_FixedDUR2,TK_NotStart,BL2-MEP-EL-3F-3070,SMDB's  Termination and Final Connection,,1320,128,48,0,192,192,48,2791.825001,0,2791.825001,,,,2015-12-29 08:00,2016-01-03 16:00,,2015-07-17 08:00,2015-07-22 16:00,2015-07-17 08:00,2015-07-22 16:00,2015-07-17 08:00,2015-07-22 16:00,2015-12-29 08:00,2016-01-03 16:00,,PT_Normal,,,,,CjDhEZQjqEyCHC0Ryb4+nw,BcqNKlXglEarxtyB8c+/QQ,,,N,0,0,,,2014-04-05 12:27,2014-04-05 13:21,admin,admin,
238,139981,1749,36060,642,0,N,N,N,CP_Drtn,TT_Task,DT_FixedDUR2,TK_NotStart,BL2-MEP-EL-3F-3040,Power Cable Puling,,1112,64,112,0,168,168,112,6375.759893,0,6375.759893,,,,2015-10-28 08:00,2015-11-10 16:00,,2015-06-11 08:00,2015-06-24 16:00,2015-06-11 08:00,2015-06-24 16:00,2015-06-11 08:00,2015-06-24 16:00,2015-10-28 08:00,2015-11-10 16:00,,PT_Normal,,,,,iJWHX8vAxk2ONGGueNFw5w,Fqx1o4GiJEKRYsKC5zypXw,,,N,0,0,,,2014-04-05 12:27,2014-04-05 13:21,admin,admin,
239,139982,1749,36160,642,0,N,N,N,CP_Drtn,TT_Task,DT_FixedDUR2,TK_NotStart,BL2-MEP-EL-3F-3030,Despature for Low Current  System Installation,4455,1440,0,112,0,336,336,112,72752.164276,0,72752.164276,,,,2016-01-13 08:00,2016-01-26 16:00,,2015-07-17 08:00,2015-07-30 16:00,2015-07-17 08:00,2015-07-30 16:00,2015-07-17 08:00,2015-07-30 16:00,2016-01-13 08:00,2016-01-26 16:00,,PT_Normal,,,,,t3OmoEsM9kmo4sFUaPUiqw,+dLCi9CFVk6SWrXPydr3TQ,,,N,0,0,,,2014-04-05 12:27,2014-04-05 13:21,admin,admin,
240,139983,1749,36160,642,0,N,N,N,CP_Drtn,TT_Task,DT_FixedDUR2,TK_NotStart,BL2-MEP-EL-3F-3050,Low Current  System Outlet installation and Connection,4455,1440,464,80,0,80,80,80,3870.787498,0,3870.787498,,,,2016-01-27 08:00,2016-02-05 16:00,,2015-07-31 08:00,2015-08-09 16:00,2015-07-31 08:00,2015-08-09 16:00,2015-07-31 08:00,2015-08-09 16:00,2016-01-27 08:00,2016-02-05 16:00,,PT_Normal,,,,,PaxGFHbNnEiGtoMsjiUefw,uvXWALh9hUCQGtBaBNJBzg,,,N,0,0,,,2014-04-05 12:27,2014-04-05 13:21,admin,admin,
241,139984,1749,36336,642,0,N,N,N,CP_Drtn,TT_Task,DT_FixedDUR2,TK_NotStart,BL2-MEP-AC-4F-1000,Supports and Hungers Fixing,,560,80,96,0,192,192,96,338.467259,0,338.467259,,,,2015-07-15 08:00,2015-07-26 16:00,,2015-05-02 08:00,2015-05-14 16:00,2015-05-02 08:00,2015-05-14 16:00,2015-05-02 08:00,2015-05-14 16:00,2015-07-15 08:00,2015-07-26 16:00,,PT_Normal,,,,,7gL/xzsYZ0OdGMY6Ijsf7Q,PfRFYsKgIEmRRW3YKIjFkQ,,,N,0,0,,,2014-04-05 12:27,2014-04-05 13:21,admin,admin,
242,139985,1749,36359,642,0,N,N,N,CP_Drtn,TT_Task,DT_FixedDUR2,TK_NotStart,BL2-MEP-AC-4F-2000,Duct Installation and Insulation,4454,360,0,168,0,263,263,168,4350.939473,0,4350.939473,,,,2015-07-28 08:00,2015-08-17 16:00,,2015-06-13 08:00,2015-07-03 16:00,2015-06-13 08:00,2015-07-03 16:00,2015-06-13 08:00,2015-07-03 16:00,2015-07-28 08:00,2015-08-17 16:00,,PT_Normal,,,,,eTGPhMWoaU2aLmPb86fk8g,bGXPgv+HOEu8RfQWTr+ZOw,,,N,0,0,,,2014-04-05 12:27,2014-04-05 13:21,admin,admin,
243,139986,1749,36359,642,0,N,N,N,CP_Drtn,TT_Task,DT_FixedDUR2,TK_NotStart,BL2-MEP-AC-4F-2030,Duct Accessories Installation,4457,552,56,112,0,448,448,112,666.965527,0,666.965527,,,,2015-09-11 08:00,2015-09-24 16:00,,2015-07-04 08:00,2015-07-17 16:00,2015-07-04 08:00,2015-07-17 16:00,2015-07-04 08:00,2015-07-17 16:00,2015-09-11 08:00,2015-09-24 16:00,,PT_Normal,,,,,H9SuUD3XmkK8EZRe2q63Ow,j30NzmON2kSN1aNNVeHunw,,,N,0,0,,,2014-04-05 12:27,2014-04-05 13:21,admin,admin,
244,139987,1749,36359,642,0,N,N,N,CP_Drtn,TT_Task,DT_FixedDUR2,TK_NotStart,BL2-MEP-AC-4F-2010,FCU's Installation,4457,752,112,64,0,96,96,64,6000.055155,0,6000.055155,,,,2015-09-08 08:00,2015-09-15 16:00,,2015-06-06 08:00,2015-06-13 16:00,2015-06-06 08:00,2015-06-13 16:00,2015-06-06 08:00,2015-06-13 16:00,2015-09-08 08:00,2015-09-15 16:00,,PT_Normal,,,,,R5J+OslDUEa7MbKEuYwpzQ,1LtEKQ02tEi04Dm6+z8TNQ,,,N,0,0,,,2014-04-05 12:27,2014-04-05 13:21,admin,admin,
245,139988,1749,36359,642,0,N,N,N,CP_Drtn,TT_Task,DT_FixedDUR2,TK_NotStart,BL2-MEP-AC-4F-2020,Chilled Water Pipes and Fittings Installation,4457,352,0,168,0,420,420,168,5251.194852,0,5251.194852,,,,2015-07-27 08:00,2015-08-16 16:00,,2015-06-13 08:00,2015-07-03 16:00,2015-06-13 08:00,2015-07-03 16:00,2015-06-13 08:00,2015-07-03 16:00,2015-07-27 08:00,2015-08-16 16:00,,PT_Normal,,,,,vVbbBLszwkyrnpnVjsV4+w,U11mqBNO/EiHVE30ezZUkw,,,N,0,0,,,2014-04-05 12:27,2014-04-05 13:21,admin,admin,
246,139989,1749,36359,642,0,N,N,N,CP_Drtn,TT_Task,DT_FixedDUR2,TK_NotStart,BL2-MEP-AC-4F-2040,Chilled Water Pipes Pressure Test,4457,544,0,48,0,48,48,48,587.116683,0,587.116683,,,,2015-09-10 08:00,2015-09-15 16:00,,2015-07-04 08:00,2015-07-09 16:00,2015-07-04 08:00,2015-07-09 16:00,2015-07-04 08:00,2015-07-09 16:00,2015-09-10 08:00,2015-09-15 16:00,,PT_Normal,,,,,Ai8q5XhNqkSLP5UXJHMkcQ,K3A7cS1QrkeqrbR1rWD1xg,,,N,0,0,,,2014-04-05 12:27,2014-04-05 13:21,admin,admin,
247,139990,1749,36359,642,0,N,N,N,CP_Drtn,TT_Task,DT_FixedDUR2,TK_NotStart,BL2-MEP-AC-4F-2050,Chilled Water Pipes Insulation,4457,1120,72,96,0,192,192,96,1670.208495,0,1670.208495,,,,2015-11-27 08:00,2015-12-08 16:00,,2015-07-10 08:00,2015-07-21 16:00,2015-07-10 08:00,2015-07-21 16:00,2015-07-10 08:00,2015-07-21 16:00,2015-11-27 08:00,2015-12-08 16:00,,PT_Normal,,,,,kWwfntFyWEqvRRXclgxBNg,u1ERH39OckqI0oJ9vkxEEg,,,N,0,0,,,2014-04-05 12:27,2014-04-05 13:21,admin,admin,
248,139991,1749,36359,642,0,N,N,N,CP_Drtn,TT_Task,DT_FixedDUR2,TK_NotStart,BL2-MEP-AC-4F-2060,Valve Package Installation,4457,544,0,48,0,48,48,48,2386.490429,0,2386.490429,,,,2015-09-16 08:00,2015-09-21 16:00,,2015-07-10 08:00,2015-07-15 16:00,2015-07-10 08:00,2015-07-15 16:00,2015-07-10 08:00,2015-07-15 16:00,2015-09-16 08:00,2015-09-21 16:00,,PT_Normal,,,,,TW1jed2iZEmwC72W9Ejgkw,hTChRuOcbk6bXDpnKRZsAA,,,N,0,0,,,2014-04-05 12:27,2014-04-05 13:21,admin,admin,
249,139992,1749,36359,642,0,N,N,N,CP_Drtn,TT_Task,DT_FixedDUR2,TK_NotStart,BL2-MEP-AC-4F-2070,FCU's Drain Pipes Installation,4457,544,112,24,0,24,24,24,519.927167,0,519.927167,,,,2015-09-22 08:00,2015-09-24 16:00,,2015-07-16 08:00,2015-07-18 16:00,2015-07-16 08:00,2015-07-18 16:00,2015-07-16 08:00,2015-07-18 16:00,2015-09-22 08:00,2015-09-24 16:00,,PT_Normal,,,,,MAinD//QSUKBN6WiSSeo6g,0JOjg+BCL0CMxchramXZJA,,,N,0,0,,,2014-04-05 12:27,2014-04-05 13:21,admin,admin,
250,139993,1749,36387,642,0,N,N,N,CP_Drtn,TT_Task,DT_FixedDUR2,TK_NotStart,BL2-MEP-AC-4F-3000,Grills and Diffusers Fixing,,1032,80,96,0,384,384,96,11550.608192,0,11550.608192,,,,2015-12-15 08:00,2015-12-26 16:00,,2015-08-08 08:00,2015-08-19 16:00,2015-08-08 08:00,2015-08-19 16:00,2015-08-08 08:00,2015-08-19 16:00,2015-12-15 08:00,2015-12-26 16:00,,PT_Normal,,,,,154BPPQr7EW1CPqzOK7gAA,/grM2D07ckqx/zmCDVgXrg,,,N,0,0,,,2014-04-05 12:27,2014-04-05 13:21,admin,admin,
251,139994,1749,36421,642,0,N,N,N,CP_Drtn,TT_Task,DT_FixedDUR2,TK_NotStart,BL2-MEP-PL-4F-1000,Low Level Water Supply Pipes Installation,,408,0,96,0,42,42,96,725.216846,0,725.216846,,,,2015-06-26 08:00,2015-07-07 16:00,,2015-05-02 08:00,2015-05-14 16:00,2015-05-02 08:00,2015-05-14 16:00,2015-05-02 08:00,2015-05-14 16:00,2015-06-26 08:00,2015-07-07 16:00,,PT_Normal,,,,,svlJitg9F0+DgqywViAoFQ,jWilVnPDKEebXWiCIelI6Q,,,N,0,0,,,2014-04-05 12:27,2014-04-05 13:21,admin,admin,
252,139995,1749,36421,642,0,N,N,N,CP_Drtn,TT_Task,DT_FixedDUR2,TK_NotStart,BL2-MEP-PL-4F-1010,Low Level Drainage Pipes Installation,,408,0,96,0,12.67,12.67,96,2291.461713,0,2291.461713,,,,2015-06-26 08:00,2015-07-07 16:00,,2015-05-02 08:00,2015-05-14 16:00,2015-05-02 08:00,2015-05-14 16:00,2015-05-02 08:00,2015-05-14 16:00,2015-06-26 08:00,2015-07-07 16:00,,PT_Normal,,,,,Q/qk9zUxZ0K8l5wKALNDuw,iAnsDe0QdEahc7liUelDhQ,,,N,0,0,,,2014-04-05 12:27,2014-04-05 13:21,admin,admin,
253,139996,1749,36421,642,0,N,N,N,CP_Drtn,TT_Task,DT_FixedDUR2,TK_NotStart,BL2-MEP-PL-4F-1020,Supports  installation for High level Pipes,,408,0,96,0,16.352,16.352,96,831.682549,0,831.682549,,,,2015-06-26 08:00,2015-07-07 16:00,,2015-05-02 08:00,2015-05-14 16:00,2015-05-02 08:00,2015-05-14 16:00,2015-05-02 08:00,2015-05-14 16:00,2015-06-26 08:00,2015-07-07 16:00,,PT_Normal,,,,,2FjCGvqO+UOdaOlcy3jujA,buaB3j3TW0CZ2+vV7LNwBQ,,,N,0,0,,,2014-04-05 12:27,2014-04-05 13:21,admin,admin,
254,139997,1749,36481,642,0,N,N,N,CP_Drtn,TT_Task,DT_FixedDUR2,TK_NotStart,BL2-MEP-PL-4F-2030,Floor Drain Installation,,432,0,48,0,6,6,48,554.143324,0,554.143324,,,,2015-09-13 08:00,2015-09-18 16:00,,2015-07-21 08:00,2015-07-26 16:00,2015-07-21 08:00,2015-07-26 16:00,2015-07-21 08:00,2015-07-26 16:00,2015-09-13 08:00,2015-09-18 16:00,,PT_Normal,,,,,hUOnBkaHtUe8UVcwIH/gsQ,eTeHwJuZsEmsdpZi0MiW+A,,,N,0,0,,,2014-04-05 12:27,2014-04-05 13:21,admin,admin,
255,139998,1749,36481,642,0,N,N,N,CP_Drtn,TT_Task,DT_FixedDUR2,TK_NotStart,BL2-MEP-PL-4F-2000,High Level Water Supply Pipes and Fittings Installation,,424,0,168,0,150.02,150.02,168,1329.597866,0,1329.597866,,,,2015-08-05 08:00,2015-08-25 16:00,,2015-06-13 08:00,2015-07-03 16:00,2015-06-13 08:00,2015-07-03 16:00,2015-06-13 08:00,2015-07-03 16:00,2015-08-05 08:00,2015-08-25 16:00,,PT_Normal,,,,,3klnOuOptE+mTLjgZHUSZg,poetlyD1w02hqkDvQbzJdQ,,,N,0,0,,,2014-04-05 12:27,2014-04-05 13:21,admin,admin,
256,139999,1749,36481,642,0,N,N,N,CP_Drtn,TT_Task,DT_FixedDUR2,TK_NotStart,BL2-MEP-PL-4F-2010,High Level Drainage Pipes Installation,,424,0,168,0,244.38,244.38,168,6583.525267,0,6583.525267,,,,2015-08-05 08:00,2015-08-25 16:00,,2015-06-13 08:00,2015-07-03 16:00,2015-06-13 08:00,2015-07-03 16:00,2015-06-13 08:00,2015-07-03 16:00,2015-08-05 08:00,2015-08-25 16:00,,PT_Normal,,,,,/Xbxs5mduUCwElBu6nfw/Q,oq3koBguMkiDp8u7cf0ogA,,,N,0,0,,,2014-04-05 12:27,2014-04-05 13:21,admin,admin,
257,140000,1749,36481,642,0,N,N,N,CP_Drtn,TT_Task,DT_FixedDUR2,TK_NotStart,BL2-MEP-PL-4F-2020,Water Supply Pipes Pressure Test,4456,616,120,48,0,48,48,48,151.744312,0,151.744312,,,,2015-09-19 08:00,2015-09-24 16:00,,2015-07-04 08:00,2015-07-09 16:00,2015-07-04 08:00,2015-07-09 16:00,2015-07-04 08:00,2015-07-09 16:00,2015-09-19 08:00,2015-09-24 16:00,,PT_Normal,,,,,w7TPxK0UA0uUxhjsF4kfyQ,En8eSnEClkCu5WZ6U95JXw,,,N,0,0,,,2014-04-05 12:27,2014-04-05 13:21,admin,admin,
258,140001,1749,36481,642,0,N,N,N,CP_Drtn,TT_Task,DT_FixedDUR2,TK_NotStart,BL2-MEP-PL-4F-2040,Drainage Pipes Gravity Test,,432,0,48,0,48,48,48,826.240719,0,826.240719,,,,2015-09-19 08:00,2015-09-24 16:00,,2015-07-27 08:00,2015-08-01 16:00,2015-07-27 08:00,2015-08-01 16:00,2015-07-27 08:00,2015-08-01 16:00,2015-09-19 08:00,2015-09-24 16:00,,PT_Normal,,,,,e+UTUuOSvEevnFFzWKLY/g,31osXTRAu0CJGQq7Co0Y+Q,,,N,0,0,,,2014-04-05 12:27,2014-04-05 13:21,admin,admin,
259,140002,1749,36482,642,0,N,N,N,CP_Drtn,TT_Task,DT_FixedDUR2,TK_NotStart,BL2-MEP-PL-4F-3000,Sanitary Ware Installation Including Connection,,464,0,112,0,383.862,383.862,112,4453.516455,0,4453.516455,,,,2015-11-04 08:00,2015-11-17 16:00,,2015-09-07 08:00,2015-09-20 16:00,2015-09-07 08:00,2015-09-20 16:00,2015-09-07 08:00,2015-09-20 16:00,2015-11-04 08:00,2015-11-17 16:00,,PT_Normal,,,,,syKRBw8FTkC55WNqHZhKPg,/rZoDA/HGUOb7+qAU5ET+w,,,N,0,0,,,2014-04-05 12:27,2014-04-05 13:21,admin,admin,
260,140003,1749,36482,642,0,N,N,N,CP_Drtn,TT_Task,DT_FixedDUR2,TK_NotStart,BL2-MEP-PL-4F-3010,Sanitary Ware Accessories Installation,,720,128,48,0,36.45,36.45,48,166.215378,0,166.215378,,,,2015-12-20 08:00,2015-12-25 16:00,,2015-09-21 08:00,2015-09-26 16:00,2015-09-21 08:00,2015-09-26 16:00,2015-09-21 08:00,2015-09-26 16:00,2015-12-20 08:00,2015-12-25 16:00,,PT_Normal,,,,,UKl/MKiB/kK5wlK0kW3Dwg,VEyjDPUlYUqOHxyf8eXBBQ,,,N,0,0,,,2014-04-05 12:27,2014-04-05 13:21,admin,admin,
261,140004,1749,36484,642,0,N,N,N,CP_Drtn,TT_Task,DT_FixedDUR2,TK_NotStart,BL2-MEP-FF-4F-3000,Fire Extinguisher Installation,,944,32,16,0,8,8,16,1076.993507,0,1076.993507,,,,2016-02-03 08:00,2016-02-04 16:00,,2015-10-08 08:00,2015-10-09 16:00,2015-10-08 08:00,2015-10-09 16:00,2015-10-08 08:00,2015-10-09 16:00,2016-02-03 08:00,2016-02-04 16:00,,PT_Normal,,,,,esweGrWZLke8GnCjgVIs1A,WPC8d40VcE2gak5OD3/DbA,,,N,0,0,,,2014-04-05 12:27,2014-04-05 13:21,admin,admin,
262,140005,1749,36484,642,0,N,N,N,CP_Drtn,TT_Task,DT_FixedDUR2,TK_NotStart,BL2-MEP-FF-4F-3010,Hose reel Cabinet Installation and Connection,,792,0,48,0,192,192,48,1336.852298,0,1336.852298,,,,2016-01-14 08:00,2016-01-19 16:00,,2015-10-07 08:00,2015-10-12 16:00,2015-10-07 08:00,2015-10-12 16:00,2015-10-07 08:00,2015-10-12 16:00,2016-01-14 08:00,2016-01-19 16:00,,PT_Normal,,,,,uI9y0sPNOkChRYNYzSs1gA,ZKb7i0UU2UyUfr69tOaO9Q,,,N,0,0,,,2014-04-05 12:27,2014-04-05 13:21,admin,admin,
263,140006,1749,36100,642,0,N,N,N,CP_Drtn,TT_Task,DT_FixedDUR2,TK_NotStart,BL2-MEP-EL-4F-1000,PVC Back Boxes and Conduits  Fixing in Wall,,464,72,96,0,384,384,96,3319.67233,0,3319.67233,,,,2015-06-24 08:00,2015-07-05 16:00,,2015-04-21 08:00,2015-05-04 16:00,2015-04-21 08:00,2015-05-04 16:00,2015-04-21 08:00,2015-05-04 16:00,2015-06-24 08:00,2015-07-05 16:00,,PT_Normal,,,,,YAdSJoD27UGu2cvTX8NddA,K506lzfjfk6LZja8WFG4Bw,,,N,0,0,,,2014-04-05 12:27,2014-04-05 13:21,admin,admin,
264,140007,1749,36100,642,0,N,N,N,CP_Drtn,TT_Task,DT_FixedDUR2,TK_NotStart,BL2-MEP-EL-4F-1010,DB's Inclosure Fixing,4455,456,48,48,0,96,96,48,2136.399392,0,2136.399392,,,,2015-07-02 08:00,2015-07-07 16:00,,2015-05-02 08:00,2015-05-07 16:00,2015-05-02 08:00,2015-05-07 16:00,2015-05-02 08:00,2015-05-07 16:00,2015-07-02 08:00,2015-07-07 16:00,,PT_Normal,,,,,SvamciYzG0Gw6aytLyluHQ,mvthx+bU8EefuLanGCj8hA,,,N,0,0,,,2014-04-05 12:27,2014-04-05 13:21,admin,admin,
265,140008,1749,36169,642,0,N,N,N,CP_Drtn,TT_Task,DT_FixedDUR2,TK_NotStart,BL2-MEP-EL-4F-2060,SMDB's  Installation,,1528,128,48,0,45,45,48,4202.598932,0,4202.598932,,,,2015-12-29 08:00,2016-01-03 16:00,,2015-06-21 08:00,2015-06-26 16:00,2015-06-21 08:00,2015-06-26 16:00,2015-06-21 08:00,2015-06-26 16:00,2015-12-29 08:00,2016-01-03 16:00,,PT_Normal,,,,,bIobqas7LkyPbHhxeZ/DKA,dGJwngkfLUyxB5WSv9CXsg,,,N,0,0,,,2014-04-05 12:27,2014-04-05 13:21,admin,admin,
266,140009,1749,36169,642,0,N,N,N,CP_Drtn,TT_Task,DT_FixedDUR2,TK_NotStart,BL2-MEP-EL-4F-2000,Lighting  Wiring,,792,80,96,0,241.713,241.713,96,3578.08423,0,3578.08423,,,,2015-09-13 08:00,2015-09-24 16:00,,2015-06-06 08:00,2015-06-17 16:00,2015-06-06 08:00,2015-06-17 16:00,2015-06-06 08:00,2015-06-17 16:00,2015-09-13 08:00,2015-09-24 16:00,,PT_Normal,,,,,m8I6BWbp9E+4ePzr8HiFxA,mcDTmd2jXEqIPd6DTCGqLg,,,N,0,0,,,2014-04-05 12:27,2014-04-05 13:21,admin,admin,
267,140010,1749,36169,642,0,N,N,N,CP_Drtn,TT_Task,DT_FixedDUR2,TK_NotStart,BL2-MEP-EL-4F-2010,Power Points Wiring,,792,80,96,0,192,192,96,2906.213289,0,2906.213289,,,,2015-09-13 08:00,2015-09-24 16:00,,2015-06-06 08:00,2015-06-17 16:00,2015-06-06 08:00,2015-06-17 16:00,2015-06-06 08:00,2015-06-17 16:00,2015-09-13 08:00,2015-09-24 16:00,,PT_Normal,,,,,5kEKRaoWPEWkpD2hK7AARA,lYGWM20uiUuXgAtG4jJrww,,,N,0,0,,,2014-04-05 12:27,2014-04-05 13:21,admin,admin,
268,140011,1749,36169,642,0,N,N,N,CP_Drtn,TT_Task,DT_FixedDUR2,TK_NotStart,BL2-MEP-EL-4F-2020,Cable Tray and Trunking Installation,,776,64,112,0,336,336,112,9078.448617,0,9078.448617,,,,2015-09-11 08:00,2015-09-24 16:00,,2015-06-06 08:00,2015-06-19 16:00,2015-06-06 08:00,2015-06-19 16:00,2015-06-06 08:00,2015-06-19 16:00,2015-09-11 08:00,2015-09-24 16:00,,PT_Normal,,,,,lKs8JoED+0+Pix4nvNGW3w,JXx1dyTMg0mUjABkM5+mNg,,,N,0,0,,,2014-04-05 12:27,2014-04-05 13:21,admin,admin,
269,140012,1749,36169,642,0,N,N,N,CP_Drtn,TT_Task,DT_FixedDUR2,TK_NotStart,BL2-MEP-EL-4F-2030,Emergency Light Wiring,,824,112,64,0,128,128,64,1210.028798,0,1210.028798,,,,2015-09-17 08:00,2015-09-24 16:00,,2015-06-06 08:00,2015-06-13 16:00,2015-06-06 08:00,2015-06-13 16:00,2015-06-06 08:00,2015-06-13 16:00,2015-09-17 08:00,2015-09-24 16:00,,PT_Normal,,,,,cZyFEbbV4UqqWPZVW7vqXg,t06Krs4G60yEzi7xXx/17w,,,N,0,0,,,2014-04-05 12:27,2014-04-05 13:21,admin,admin,
270,140013,1749,36169,642,0,N,N,N,CP_Drtn,TT_Task,DT_FixedDUR2,TK_NotStart,BL2-MEP-EL-4F-2040,Fire Alarm System Wiring,,792,80,96,0,192,192,96,7123.009694,0,7123.009694,,,,2015-09-13 08:00,2015-09-24 16:00,,2015-06-06 08:00,2015-06-17 16:00,2015-06-06 08:00,2015-06-17 16:00,2015-06-06 08:00,2015-06-17 16:00,2015-09-13 08:00,2015-09-24 16:00,,PT_Normal,,,,,r1QwUdgt8Uyc2ouOQ2vfjQ,O+ZJBJEHrEWpM8iBjMm6mQ,,,N,0,0,,,2014-04-05 12:27,2014-04-05 13:21,admin,admin,
271,140014,1749,36169,642,0,N,N,N,CP_Drtn,TT_Task,DT_FixedDUR2,TK_NotStart,BL2-MEP-EL-4F-2070,DB's Installation and Termination,4455,672,0,96,0,288,288,96,4982.925025,0,4982.925025,,,,2015-09-13 08:00,2015-09-24 16:00,,2015-06-21 08:00,2015-07-02 16:00,2015-06-21 08:00,2015-07-02 16:00,2015-06-21 08:00,2015-07-02 16:00,2015-09-13 08:00,2015-09-24 16:00,,PT_Normal,,,,,P6msc33ObE20gHqqhJVpzw,j2aHmatzrESF6VbCQAV3gQ,,,N,0,0,,,2014-04-05 12:27,2014-04-05 13:21,admin,admin,
272,140015,1749,36169,642,0,N,N,N,CP_Drtn,TT_Task,DT_FixedDUR2,TK_NotStart,BL2-MEP-EL-4F-2050,Low Current  System Wiring,4455,1672,392,112,0,244,244,112,38231.783306,0,38231.783306,,,,2016-01-01 08:00,2016-01-14 16:00,,2015-06-06 08:00,2015-06-19 16:00,2015-06-06 08:00,2015-06-19 16:00,2015-06-06 08:00,2015-06-19 16:00,2016-01-01 08:00,2016-01-14 16:00,,PT_Normal,,,,,3U8zR3grMEiQCBIL6ZRa8g,NNWIoX1/hEmhDBrsu5i/FA,,,N,0,0,,,2014-04-05 12:27,2014-04-05 13:21,admin,admin,
273,140016,1749,36170,642,0,N,N,N,CP_Drtn,TT_Task,DT_FixedDUR2,TK_NotStart,BL2-MEP-EL-4F-3010,Lights Fitting Fixing,,872,64,112,0,244,244,112,7336.659378,0,7336.659378,,,,2015-11-25 08:00,2015-12-08 16:00,,2015-08-08 08:00,2015-08-21 16:00,2015-08-08 08:00,2015-08-21 16:00,2015-08-08 08:00,2015-08-21 16:00,2015-11-25 08:00,2015-12-08 16:00,,PT_Normal,,,,,ydHEtuaHPE+SoBI62p4Crw,3OYThYJ5XEmPPRZqT+7A2A,,,N,0,0,,,2014-04-05 12:27,2014-04-05 13:21,admin,admin,
274,140017,1749,36170,642,0,N,N,N,CP_Drtn,TT_Task,DT_FixedDUR2,TK_NotStart,BL2-MEP-EL-4F-3060,Sockets and Switches Fixing,,1160,112,64,0,128,128,64,1174.957134,0,1174.957134,,,,2015-12-31 08:00,2016-01-07 16:00,,2015-08-08 08:00,2015-08-15 16:00,2015-08-08 08:00,2015-08-15 16:00,2015-08-08 08:00,2015-08-15 16:00,2015-12-31 08:00,2016-01-07 16:00,,PT_Normal,,,,,fVCqIOPVUUmKr+W5HIBA2g,LVnH8nsmSky/CPpt5h3TOA,,,N,0,0,,,2014-04-05 12:27,2014-04-05 13:21,admin,admin,
275,140018,1749,36170,642,0,N,N,N,CP_Drtn,TT_Task,DT_FixedDUR2,TK_NotStart,BL2-MEP-EL-4F-3020,Emergency Light Fixing,,1216,112,64,0,128,128,64,5722.024623,0,5722.024623,,,,2016-01-07 08:00,2016-01-14 16:00,,2015-08-08 08:00,2015-08-15 16:00,2015-08-08 08:00,2015-08-15 16:00,2015-08-08 08:00,2015-08-15 16:00,2016-01-07 08:00,2016-01-14 16:00,,PT_Normal,,,,,C37hAueSk0yFelumPIM4jQ,LrLAUhEnnEWeZYlKmSJRoQ,,,N,0,0,,,2014-04-05 12:27,2014-04-05 13:21,admin,admin,
276,140019,1749,36170,642,0,N,N,N,CP_Drtn,TT_Task,DT_FixedDUR2,TK_NotStart,BL2-MEP-EL-4F-3030,Fire Alarm System Detector Installation,,968,80,96,0,192,192,96,4046.378277,0,4046.378277,,,,2015-12-07 08:00,2015-12-18 16:00,,2015-08-08 08:00,2015-08-19 16:00,2015-08-08 08:00,2015-08-19 16:00,2015-08-08 08:00,2015-08-19 16:00,2015-12-07 08:00,2015-12-18 16:00,,PT_Normal,,,,,eZb1vEdJ1kuwfBAdEwMNXA,1aVkWHQCVUebpOyazyQNbg,,,N,0,0,,,2014-04-05 12:27,2014-04-05 13:21,admin,admin,
277,140020,1749,36170,642,0,N,N,N,CP_Drtn,TT_Task,DT_FixedDUR2,TK_NotStart,BL2-MEP-EL-4F-3070,SMDB's  Termination and Final Connection,,1192,128,48,0,192,192,48,2791.825001,0,2791.825001,,,,2016-01-04 08:00,2016-01-09 16:00,,2015-08-08 08:00,2015-08-13 16:00,2015-08-08 08:00,2015-08-13 16:00,2015-08-08 08:00,2015-08-13 16:00,2016-01-04 08:00,2016-01-09 16:00,,PT_Normal,,,,,18dXL3//ykuk9xKl9922WQ,+62P/3sIq0u9sxk9w2bfeg,,,N,0,0,,,2014-04-05 12:27,2014-04-05 13:21,admin,admin,
278,140021,1749,36169,642,0,N,N,N,CP_Drtn,TT_Task,DT_FixedDUR2,TK_NotStart,BL2-MEP-EL-4F-3000,Power Cable Puling,,1048,64,112,0,168,168,112,6375.759893,0,6375.759893,,,,2015-11-11 08:00,2015-11-24 16:00,,2015-07-03 08:00,2015-07-16 16:00,2015-07-03 08:00,2015-07-16 16:00,2015-07-03 08:00,2015-07-16 16:00,2015-11-11 08:00,2015-11-24 16:00,,PT_Normal,,,,,p4YAnnIkG0+CEsKD+MUl3Q,PE+5kFHmOUC3jP4vjUrl4A,,,N,0,0,,,2014-04-05 12:27,2014-04-05 13:21,admin,admin,
279,140022,1749,36170,642,0,N,N,N,CP_Drtn,TT_Task,DT_FixedDUR2,TK_NotStart,BL2-MEP-EL-4F-3040,Despature for Low Current  System Installation,4455,1280,0,112,0,336,336,112,72752.164276,0,72752.164276,,,,2016-01-15 08:00,2016-01-28 16:00,,2015-08-08 08:00,2015-08-21 16:00,2015-08-08 08:00,2015-08-21 16:00,2015-08-08 08:00,2015-08-21 16:00,2016-01-15 08:00,2016-01-28 16:00,,PT_Normal,,,,,HxA0kxYdmEOqluzsFMLqsw,zcA0/cRc206wWaJUh2F0jg,,,N,0,0,,,2014-04-05 12:27,2014-04-05 13:21,admin,admin,
280,140023,1749,36170,642,0,N,N,N,CP_Drtn,TT_Task,DT_FixedDUR2,TK_NotStart,BL2-MEP-EL-4F-3050,Low Current  System Outlet installation and Connection,4455,1280,336,80,0,80,80,80,3870.787498,0,3870.787498,,,,2016-01-29 08:00,2016-02-07 16:00,,2015-08-22 08:00,2015-08-31 16:00,2015-08-22 08:00,2015-08-31 16:00,2015-08-22 08:00,2015-08-31 16:00,2016-01-29 08:00,2016-02-07 16:00,,PT_Normal,,,,,Q8VYF9r+f0mKYIUE+q5M6g,KrejhMP3fE2Raj7zdENnlw,,,N,0,0,,,2014-04-05 12:27,2014-04-05 13:21,admin,admin,
281,140024,1749,36074,642,0,N,N,N,CP_Drtn,TT_Task,DT_FixedDUR2,TK_NotStart,BL2-MEP-EL-B2-2070,SMDB's Installation,,1208,336,48,0,48,48,48,4976.925025,0,4976.925025,,,,2015-06-24 08:00,2015-06-29 16:00,,2014-12-31 08:00,2015-01-08 16:00,2014-12-31 08:00,2015-01-08 16:00,2014-12-31 08:00,2015-01-08 16:00,2015-06-24 08:00,2015-06-29 16:00,,PT_Normal,,,,,+F53eH91bUKHSXGpJpfKgg,b197kgha00ywoo+N9jMi3g,,,N,0,0,,,2014-04-05 12:27,2014-04-05 13:21,admin,admin,
282,140025,1749,36074,642,0,N,N,N,CP_Drtn,TT_Task,DT_FixedDUR2,TK_NotStart,BL2-MEP-EL-B2-2040,BMS System Wiring,,1184,136,64,0,186,186,64,15191.435697,0,15191.435697,,,,2015-06-14 08:00,2015-06-21 16:00,,2014-12-23 08:00,2014-12-31 16:00,2014-12-23 08:00,2014-12-31 16:00,2014-12-23 08:00,2014-12-31 16:00,2015-06-14 08:00,2015-06-21 16:00,,PT_Normal,,,,,aJexaISYkk+H96ROc9Q9hw,bx96RXXg4UiOu2ZzU/ha5A,,,N,0,0,,,2014-04-05 12:27,2014-04-05 13:21,admin,admin,
283,140026,1749,36074,642,0,N,N,N,CP_Drtn,TT_Task,DT_FixedDUR2,TK_NotStart,BL2-MEP-EL-B2-2020,Lighting  Wiring,,1264,128,96,0,241.713,241.713,96,3578.08423,0,3578.08423,,,,2015-06-15 08:00,2015-06-26 16:00,,2014-12-13 08:00,2014-12-25 16:00,2014-12-13 08:00,2014-12-25 16:00,2014-12-13 08:00,2014-12-25 16:00,2015-06-15 08:00,2015-06-26 16:00,,PT_Normal,,,,,u3YUMvrs1Uu3YzgcwuGqIw,zjK+AdF+10WwCAKgjrWmyQ,,,N,0,0,,,2014-04-05 12:27,2014-04-05 13:21,admin,admin,
284,140027,1749,36074,642,0,N,N,N,CP_Drtn,TT_Task,DT_FixedDUR2,TK_NotStart,BL2-MEP-EL-B2-2030,Power Points Wiring,,1168,32,96,0,192,192,96,2906.213289,0,2906.213289,,,,2015-06-03 08:00,2015-06-14 16:00,,2014-12-13 08:00,2014-12-25 16:00,2014-12-13 08:00,2014-12-25 16:00,2014-12-13 08:00,2014-12-25 16:00,2015-06-03 08:00,2015-06-14 16:00,,PT_Normal,,,,,XiifTju7VEO0LPjl+rs9TA,xEwm8ArPlEG/Ti6S3XUmZQ,,,N,0,0,,,2014-04-05 12:27,2014-04-05 13:21,admin,admin,
285,140028,1749,36074,642,0,N,N,N,CP_Drtn,TT_Task,DT_FixedDUR2,TK_NotStart,BL2-MEP-EL-B2-2000,Cable Tray and Trunking Installation,,1144,56,168,0,336,336,168,9085.448617,0,9085.448617,,,,2015-05-31 08:00,2015-06-20 16:00,,2014-12-13 08:00,2015-01-07 16:00,2014-12-13 08:00,2015-01-07 16:00,2014-12-13 08:00,2015-01-07 16:00,2015-05-31 08:00,2015-06-20 16:00,,PT_Normal,,,,,Ks/4RZqtD0+RtvOzGEbOGw,4Pe8/eewk0+rd0vTe84aHQ,,,N,0,0,,,2014-04-05 12:27,2014-04-05 13:21,admin,admin,
286,140029,1749,36074,642,0,N,N,N,CP_Drtn,TT_Task,DT_FixedDUR2,TK_NotStart,BL2-MEP-EL-B2-2050,Emergency Light Wiring,,1296,208,64,0,128,128,64,1210.028798,0,1210.028798,,,,2015-06-19 08:00,2015-06-26 16:00,,2014-12-13 08:00,2014-12-21 16:00,2014-12-13 08:00,2014-12-21 16:00,2014-12-13 08:00,2014-12-21 16:00,2015-06-19 08:00,2015-06-26 16:00,,PT_Normal,,,,,P1xzXgvR8kmrIy5y9kZXAw,6NVY3NReYUC/bOlxBrSjqA,,,N,0,0,,,2014-04-05 12:27,2014-04-05 13:21,admin,admin,
287,140030,1749,36074,642,0,N,N,N,CP_Drtn,TT_Task,DT_FixedDUR2,TK_NotStart,BL2-MEP-EL-B2-2010,Fire Alarm System Wiring,,1264,176,96,0,192,192,96,7123.009694,0,7123.009694,,,,2015-06-15 08:00,2015-06-26 16:00,,2014-12-13 08:00,2014-12-25 16:00,2014-12-13 08:00,2014-12-25 16:00,2014-12-13 08:00,2014-12-25 16:00,2015-06-15 08:00,2015-06-26 16:00,,PT_Normal,,,,,ag2fr8kKo0WFR30rrcIUWA,xsPKHc744UyaRpEgchXVnw,,,N,0,0,,,2014-04-05 12:27,2014-04-05 13:21,admin,admin,
288,140031,1749,36074,642,0,N,N,N,CP_Drtn,TT_Task,DT_FixedDUR2,TK_NotStart,BL2-MEP-EL-B2-2060,DB's Installation and Termination,4455,1136,0,96,0,288,288,96,4982.925025,0,4982.925025,,,,2015-06-15 08:00,2015-06-26 16:00,,2014-12-31 08:00,2015-01-15 16:00,2014-12-31 08:00,2015-01-15 16:00,2014-12-31 08:00,2015-01-15 16:00,2015-06-15 08:00,2015-06-26 16:00,,PT_Normal,,,,,u/egdYi5sEmxYndqItE2Gw,lCNo41B9ZUCmJqM4JM+dwg,,,N,0,0,,,2014-04-05 12:27,2014-04-05 13:21,admin,admin,
289,140032,1749,36118,642,0,N,N,N,CP_Drtn,TT_Task,DT_FixedDUR2,TK_NotStart,BL2-MEP-EL-B2-1000,PVC Back Boxes and Conduits  Fixing in Wall,,568,0,192,0,384,384,192,3331.67233,0,3331.67233,,,,2015-01-17 08:00,2015-02-12 16:00,,2014-10-20 08:00,2014-11-19 16:00,2014-10-20 08:00,2014-11-19 16:00,2014-10-20 08:00,2014-11-19 16:00,2015-01-17 08:00,2015-02-12 16:00,,PT_Normal,,,,,Fnc47a5yUke/BVNIsjL+PQ,B3aYbSILtk+WxRT0PP8qPQ,,,N,0,0,,,2014-04-05 12:27,2014-04-05 13:21,admin,admin,
290,140033,1749,36118,642,0,N,N,N,CP_Drtn,TT_Task,DT_FixedDUR2,TK_NotStart,BL2-MEP-EL-B2-1010,DB's Inclosure Fixing,4455,768,168,48,0,96,96,48,2136.399392,0,2136.399392,,,,2015-02-11 08:00,2015-02-17 16:00,,2014-10-16 08:00,2014-10-22 16:00,2014-10-16 08:00,2014-10-22 16:00,2014-10-16 08:00,2014-10-22 16:00,2015-02-11 08:00,2015-02-17 16:00,,PT_Normal,,,,,LmRHOtxjU0qMZaPBkimh+Q,FPWGQsj2n0eJsax4X1RmPg,,,N,0,0,,,2014-04-05 12:27,2014-04-05 13:21,admin,admin,
291,140034,1749,36119,642,0,N,N,N,CP_Drtn,TT_Task,DT_FixedDUR2,TK_NotStart,BL2-MEP-EL-B2-3020,Lights Fitting Fixing,,1384,152,112,0,244,244,112,7336.659378,0,7336.659378,,,,2015-09-02 08:00,2015-09-15 16:00,,2015-02-28 08:00,2015-03-15 16:00,2015-02-28 08:00,2015-03-15 16:00,2015-02-28 08:00,2015-03-15 16:00,2015-09-02 08:00,2015-09-15 16:00,,PT_Normal,,,,,ttV/drDC9E6NVL38SFauJA,upUKvZZgEEmIs/GjMeFBpA,,,N,0,0,,,2014-04-05 12:27,2014-04-05 13:21,admin,admin,
292,140035,1749,36119,642,0,N,N,N,CP_Drtn,TT_Task,DT_FixedDUR2,TK_NotStart,BL2-MEP-EL-B2-3050,Sockets and Switches Fixing,,1776,0,64,0,128,128,64,1174.957134,0,1174.957134,,,,2015-11-13 08:00,2015-11-20 16:00,,2015-03-26 08:00,2015-04-04 16:00,2015-03-26 08:00,2015-04-04 16:00,2015-03-26 08:00,2015-04-04 16:00,2015-11-13 08:00,2015-11-20 16:00,,PT_Normal,,,,,4uGq7VYJmU2PMnmxHhb+WA,xfuIRwNPWkSrpgadmpjfEA,,,N,0,0,,,2014-04-05 12:27,2014-04-05 13:21,admin,admin,
293,140036,1749,36119,642,0,N,N,N,CP_Drtn,TT_Task,DT_FixedDUR2,TK_NotStart,BL2-MEP-EL-B2-3030,Emergency Light Fixing,,2016,200,64,0,128,128,64,5722.024623,0,5722.024623,,,,2015-11-20 08:00,2015-11-27 16:00,,2015-02-28 08:00,2015-03-08 16:00,2015-02-28 08:00,2015-03-08 16:00,2015-02-28 08:00,2015-03-08 16:00,2015-11-20 08:00,2015-11-27 16:00,,PT_Normal,,,,,FJka7MEziUmiP3qqkMCTDw,VwjuP4gyZkmhHNatYd6E5w,,,N,0,0,,,2014-04-05 12:27,2014-04-05 13:21,admin,admin,
294,140037,1749,36119,642,0,N,N,N,CP_Drtn,TT_Task,DT_FixedDUR2,TK_NotStart,BL2-MEP-EL-B2-3000,CO2 System Installation,,1040,0,48,0,179.65,179.65,48,21033.761938,0,21033.761938,,,,2016-01-19 08:00,2016-01-24 16:00,,2015-09-11 08:00,2015-09-16 16:00,2015-09-11 08:00,2015-09-16 16:00,2015-09-11 08:00,2015-09-16 16:00,2016-01-19 08:00,2016-01-24 16:00,,PT_Normal,,,,,1YxqPjq+QEKQ/Wb1PqzyHw,CUb+zcAj4EmMmHLGQuy/IA,,,N,0,0,,,2014-04-05 12:27,2014-04-05 13:21,admin,admin,
295,140038,1749,36119,642,0,N,N,N,CP_Drtn,TT_Task,DT_FixedDUR2,TK_NotStart,BL2-MEP-EL-B2-3010,Fire Alarm System Detector Installation,,1576,168,96,0,192,192,96,4046.378277,0,4046.378277,,,,2015-09-26 08:00,2015-10-07 16:00,,2015-02-28 08:00,2015-03-12 16:00,2015-02-28 08:00,2015-03-12 16:00,2015-02-28 08:00,2015-03-12 16:00,2015-09-26 08:00,2015-10-07 16:00,,PT_Normal,,,,,3IY3E2XjYEiU5E/vBolNEw,AvUPV7AhZ0y8bm/hHwyZOg,,,N,0,0,,,2014-04-05 12:27,2014-04-05 13:21,admin,admin,
296,140039,1749,36119,642,0,N,N,N,CP_Drtn,TT_Task,DT_FixedDUR2,TK_NotStart,BL2-MEP-EL-B2-3060,SMDB's  Termination and Final Connection,,2040,216,48,0,192,192,48,2791.825001,0,2791.825001,,,,2015-11-23 08:00,2015-11-28 16:00,,2015-02-28 08:00,2015-03-05 16:00,2015-02-28 08:00,2015-03-05 16:00,2015-02-28 08:00,2015-03-05 16:00,2015-11-23 08:00,2015-11-28 16:00,,PT_Normal,,,,,ZXCwjvEH7kihBOGy59BiJA,3QSeN1LSPEuE1dcQI94J9g,,,N,0,0,,,2014-04-05 12:27,2014-04-05 13:21,admin,admin,
297,140040,1749,36074,642,0,N,N,N,CP_Drtn,TT_Task,DT_FixedDUR2,TK_NotStart,BL2-MEP-EL-B2-3040,Power Cable Puling,,1560,152,112,0,168,168,112,13646.333768,0,13646.333768,,,,2015-08-19 08:00,2015-09-01 16:00,,2015-01-17 08:00,2015-02-01 16:00,2015-01-17 08:00,2015-02-01 16:00,2015-01-17 08:00,2015-02-01 16:00,2015-08-19 08:00,2015-09-01 16:00,,PT_Normal,,,,,2cmS+XcjbEebnETocyR90A,7BS3fTPD70GMHGHZJucHMA,,,N,0,0,,,2014-04-05 12:27,2014-04-05 13:21,admin,admin,
298,140041,1749,36354,642,0,N,N,N,CP_Drtn,TT_Task,DT_FixedDUR2,TK_NotStart,BL2-MEP-AC-B2-1000,Supports and Hungers Fixing,,920,192,96,0,192,192,96,130.114912,0,130.114912,,,,2015-02-26 08:00,2015-03-11 16:00,,2014-10-08 10:00,2014-10-22 16:00,2014-10-08 10:00,2014-10-22 16:00,2014-10-08 10:00,2014-10-22 16:00,2015-02-26 08:00,2015-03-11 16:00,,PT_Normal,,,,,InTwuqORXE2H7ZY34X18hg,89IyMUEOxkmFEz5x3TZHeg,,,N,0,0,,,2014-04-05 12:27,2014-04-05 13:21,admin,admin,
299,140042,1749,36500,642,0,N,N,N,CP_Drtn,TT_Task,DT_FixedDUR2,TK_NotStart,BL2-MEP-AC-B2-3000,Grills and Diffusers Fixing,,1248,0,80,0,320,320,80,426.81116,0,426.81116,,,,2015-10-08 08:00,2015-10-17 16:00,,2015-04-30 08:00,2015-05-11 16:00,2015-04-30 08:00,2015-05-11 16:00,2015-04-30 08:00,2015-05-11 16:00,2015-10-08 08:00,2015-10-17 16:00,,PT_Normal,,,,,TpPfhJ5RA0CyJdMsCBZRLQ,csj+0INl10WDDNRr2x913Q,,,N,0,0,,,2014-04-05 12:27,2014-04-05 13:21,admin,admin,
300,140043,1749,36365,642,0,N,N,N,CP_Drtn,TT_Task,DT_FixedDUR2,TK_NotStart,BL2-MEP-AC-B2-2000,Fresh Air Duct and Extract Duct Installation,4454,600,0,168,0,1008,1008,168,2029.377292,0,2029.377292,,,,2015-03-12 08:00,2015-04-05 16:00,,2014-12-13 08:00,2015-01-07 16:00,2014-12-13 08:00,2015-01-07 16:00,2014-12-13 08:00,2015-01-07 16:00,2015-03-12 08:00,2015-04-05 16:00,,PT_Normal,,,,,Gm/OaYUEuUW4GzpdV4ReTg,zDbK5WNA4EGkmNNwVuoY6A,,,N,0,0,,,2014-04-05 12:27,2014-04-05 13:21,admin,admin,
301,140044,1749,36365,642,0,N,N,N,CP_Drtn,TT_Task,DT_FixedDUR2,TK_NotStart,BL2-MEP-AC-B2-2010,Duct Accessories Installation,4457,1080,160,112,0,448,448,112,250.167804,0,250.167804,,,,2015-06-13 08:00,2015-06-26 16:00,,2015-01-08 08:00,2015-01-24 16:00,2015-01-08 08:00,2015-01-24 16:00,2015-01-08 08:00,2015-01-24 16:00,2015-06-13 08:00,2015-06-26 16:00,,PT_Normal,,,,,WKrHZ3e8vEu8Ik1hODHKzA,TJJjrGd+8kKkIWhHmLjqnw,,,N,0,0,,,2014-04-05 12:27,2014-04-05 13:21,admin,admin,
302,140045,1749,36412,642,0,N,N,N,CP_Drtn,TT_Task,DT_FixedDUR2,TK_NotStart,BL2-MEP-PL-B2-3010,Sanitary Ware Installation Including Connection,,1008,0,96,0,383.862,383.862,96,4451.516455,0,4451.516455,,,,2015-08-16 08:00,2015-08-27 16:00,,2015-04-04 08:00,2015-04-16 16:00,2015-04-04 08:00,2015-04-16 16:00,2015-04-04 08:00,2015-04-16 16:00,2015-08-16 08:00,2015-08-27 16:00,,PT_Normal,,,,,W76LPrzCpEmQXe3ueStcFA,AauO5p274kGmYeG7uE6fHQ,,,N,0,0,,,2014-04-05 12:27,2014-04-05 13:21,admin,admin,
303,140046,1749,36412,642,0,N,N,N,CP_Drtn,TT_Task,DT_FixedDUR2,TK_NotStart,BL2-MEP-PL-B2-3020,Sanitary Ware Accessories Installation,,1632,216,48,0,36.45,36.45,48,166.215378,0,166.215378,,,,2015-11-14 08:00,2015-11-19 16:00,,2015-04-18 08:00,2015-04-23 16:00,2015-04-18 08:00,2015-04-23 16:00,2015-04-18 08:00,2015-04-23 16:00,2015-11-14 08:00,2015-11-19 16:00,,PT_Normal,,,,,PtPoFPaJl0OHT/Ihe24A5A,LpxnWlqqPUiZnS+0pCjYFw,,,N,0,0,,,2014-04-05 12:27,2014-04-05 13:21,admin,admin,
304,140047,1749,36405,642,0,N,N,N,CP_Drtn,TT_Task,DT_FixedDUR2,TK_NotStart,BL2-MEP-PL-B2-3000,Manhole Covers  Installation,,2624,216,48,0,37.5,37.5,48,494.574212,0,494.574212,,,,2016-01-29 08:00,2016-02-03 16:00,,2015-02-21 08:00,2015-02-26 16:00,2015-02-21 08:00,2015-02-26 16:00,2015-02-21 08:00,2015-02-26 16:00,2016-01-29 08:00,2016-02-03 16:00,,PT_Normal,,,,,27yDO8QOPkKHMCVkaT+UdA,TnsjIoTOQkG5FSTtjgqwTQ,,,N,0,0,,,2014-04-05 12:27,2014-04-05 13:21,admin,admin,
305,140048,1749,36504,642,0,N,N,N,CP_Drtn,TT_Task,DT_FixedDUR2,TK_NotStart,BL2-MEP-PL-B2-1000,Low Level Water Supply Pipes Installation,,768,168,96,0,42,42,96,725.216846,0,725.216846,,,,2015-02-04 08:00,2015-02-17 16:00,,2014-10-08 10:00,2014-10-22 16:00,2014-10-08 10:00,2014-10-22 16:00,2014-10-08 10:00,2014-10-22 16:00,2015-02-04 08:00,2015-02-17 16:00,,PT_Normal,,,,,RHR4IRggf0CFw+KERbRCAA,lmhmZjbrnUGD1tqnfFsrDw,,,N,0,0,,,2014-04-05 12:27,2014-04-05 13:21,admin,admin,
306,140049,1749,36504,642,0,N,N,N,CP_Drtn,TT_Task,DT_FixedDUR2,TK_NotStart,BL2-MEP-PL-B2-1010,Low Level Drainage Pipes Installation,,768,168,96,0,12.67,12.67,96,94.429262,0,94.429262,,,,2015-02-04 08:00,2015-02-17 16:00,,2014-10-08 10:00,2014-10-22 16:00,2014-10-08 10:00,2014-10-22 16:00,2014-10-08 10:00,2014-10-22 16:00,2015-02-04 08:00,2015-02-17 16:00,,PT_Normal,,,,,OhFC4C98jk+bBQ2MD2xiig,RltwKUTqakWV4iBHxQik5w,,,N,0,0,,,2014-04-05 12:27,2014-04-05 13:21,admin,admin,
307,140050,1749,36504,642,0,N,N,N,CP_Drtn,TT_Task,DT_FixedDUR2,TK_NotStart,BL2-MEP-PL-B2-1020,Supports  installation for High level Pipes,,768,168,96,0,16.352,16.352,96,831.682549,0,831.682549,,,,2015-02-04 08:00,2015-02-17 16:00,,2014-10-08 10:00,2014-10-22 16:00,2014-10-08 10:00,2014-10-22 16:00,2014-10-08 10:00,2014-10-22 16:00,2015-02-04 08:00,2015-02-17 16:00,,PT_Normal,,,,,OBIq7FEGIECs3GSYBYVizw,XyF5TaSNq0ezTStu3C90KA,,,N,0,0,,,2014-04-05 12:27,2014-04-05 13:21,admin,admin,
308,140051,1749,36405,642,0,N,N,N,CP_Drtn,TT_Task,DT_FixedDUR2,TK_NotStart,BL2-MEP-PL-B2-2020,Parking Drain Installation,,896,0,48,0,48,48,48,553.83323,0,553.83323,,,,2015-06-15 08:00,2015-06-20 16:00,,2015-02-07 08:00,2015-02-12 16:00,2015-02-07 08:00,2015-02-12 16:00,2015-02-07 08:00,2015-02-12 16:00,2015-06-15 08:00,2015-06-20 16:00,,PT_Normal,,,,,h1AV5TD+cUOZO/H+7oFNoQ,tpah5/0UME+tONSUWLl2kg,,,N,0,0,,,2014-04-05 12:27,2014-04-05 13:21,admin,admin,
309,140052,1749,36405,642,0,N,N,N,CP_Drtn,TT_Task,DT_FixedDUR2,TK_NotStart,BL2-MEP-PL-B2-2010,High Level Water Supply Pipes and Fittings Installation,,664,0,168,0,150.02,150.02,168,1329.597866,0,1329.597866,,,,2015-03-22 08:00,2015-04-14 16:00,,2014-12-13 08:00,2015-01-07 16:00,2014-12-13 08:00,2015-01-07 16:00,2014-12-13 08:00,2015-01-07 16:00,2015-03-22 08:00,2015-04-14 16:00,,PT_Normal,,,,,ZcLPdol/okmVdCIp8z6XBw,dzj0L8a7pkmBtPD7fWwJVA,,,N,0,0,,,2014-04-05 12:27,2014-04-05 13:21,admin,admin,
310,140053,1749,36405,642,0,N,N,N,CP_Drtn,TT_Task,DT_FixedDUR2,TK_NotStart,BL2-MEP-PL-B2-2000,High Level Drainage Pipes Installation,,664,104,168,0,244.38,244.38,168,6583.525267,0,6583.525267,,,,2015-03-22 08:00,2015-04-14 16:00,,2014-12-13 08:00,2015-01-07 16:00,2014-12-13 08:00,2015-01-07 16:00,2014-12-13 08:00,2015-01-07 16:00,2015-03-22 08:00,2015-04-14 16:00,,PT_Normal,,,,,xtgtm5sWgkOkWe8gxiYf0g,0sPe9w/4vkmZibv/G/sG4g,,,N,0,0,,,2014-04-05 12:27,2014-04-05 13:21,admin,admin,
311,140054,1749,36405,642,0,N,N,N,CP_Drtn,TT_Task,DT_FixedDUR2,TK_NotStart,BL2-MEP-PL-B2-2030,Water Supply Pipes Pressure Test,4456,1144,224,48,0,48,48,48,151.744312,0,151.744312,,,,2015-06-21 08:00,2015-06-26 16:00,,2015-01-08 08:00,2015-01-14 16:00,2015-01-08 08:00,2015-01-14 16:00,2015-01-08 08:00,2015-01-14 16:00,2015-06-21 08:00,2015-06-26 16:00,,PT_Normal,,,,,joxGZsWf5kSa2LLr/7GrkA,S6rQgoHfmEa+Gol+JFW00w,,,N,0,0,,,2014-04-05 12:27,2014-04-05 13:21,admin,admin,
312,140055,1749,36405,642,0,N,N,N,CP_Drtn,TT_Task,DT_FixedDUR2,TK_NotStart,BL2-MEP-PL-B2-2040,Drainage Pipes Gravity Test,,896,0,48,0,48,48,48,826.240719,0,826.240719,,,,2015-06-21 08:00,2015-06-26 16:00,,2015-02-14 08:00,2015-02-19 16:00,2015-02-14 08:00,2015-02-19 16:00,2015-02-14 08:00,2015-02-19 16:00,2015-06-21 08:00,2015-06-26 16:00,,PT_Normal,,,,,391E6qEQjES0cEra/NvZPQ,LoLzK43mRkKdTj09pD5TmA,,,N,0,0,,,2014-04-05 12:27,2014-04-05 13:21,admin,admin,
313,140056,1749,36405,642,0,N,N,N,CP_Drtn,TT_Task,DT_FixedDUR2,TK_NotStart,BL2-MEP-PL-B2-2050,Sump Pumps Installation Including Connection,,2216,1904,168,0,450,450,168,2579.277817,0,2579.277817,,,,2015-12-29 08:00,2016-01-18 16:00,,2015-03-16 08:00,2015-04-08 16:00,2015-03-16 08:00,2015-04-08 16:00,2015-03-16 08:00,2015-04-08 16:00,2015-12-29 08:00,2016-01-18 16:00,,PT_Normal,,,,,0T4UqF7GT0WmIS+PX1Mdaw,SX6kme7AjUKthjsLLaCP6g,,,N,0,0,,,2014-04-05 12:27,2014-04-05 13:21,admin,admin,
314,140057,1749,36448,642,0,N,N,N,CP_Drtn,TT_Task,DT_FixedDUR2,TK_NotStart,BL2-MEP-FF-B2-3000,Fire Extinguisher Installation,,1136,32,16,0,8,8,16,1076.993507,0,1076.993507,,,,2016-01-22 08:00,2016-01-23 16:00,,2015-09-02 08:00,2015-09-03 16:00,2015-09-02 08:00,2015-09-03 16:00,2015-09-02 08:00,2015-09-03 16:00,2016-01-22 08:00,2016-01-23 16:00,,PT_Normal,,,,,+/Kfx1dWdUON6jzXNAzL/Q,07PrJ0bF1EeVaozdcV4tLA,,,N,0,0,,,2014-04-05 12:27,2014-04-05 13:21,admin,admin,
315,140058,1749,36448,642,0,N,N,N,CP_Drtn,TT_Task,DT_FixedDUR2,TK_NotStart,BL2-MEP-FF-B2-3010,Hose reel Cabinet Installation and Connection,,792,0,48,0,192,192,48,1336.852298,0,1336.852298,,,,2015-12-09 08:00,2015-12-14 16:00,,2015-09-01 08:00,2015-09-06 16:00,2015-09-01 08:00,2015-09-06 16:00,2015-09-01 08:00,2015-09-06 16:00,2015-12-09 08:00,2015-12-14 16:00,,PT_Normal,,,,,D+kvFrnFxky3XQQK0LHLEg,dzWLQmlAPEmcRWeOZzR1Pw,,,N,0,0,,,2014-04-05 12:27,2014-04-05 13:21,admin,admin,
316,140059,1749,36508,642,0,N,N,N,CP_Drtn,TT_Task,DT_FixedDUR2,TK_NotStart,BL2-MEP-FF-B2-1000,Supports  and Hungers installation,,1416,192,96,0,288,288,96,47.857235,0,47.857235,,,,2015-05-10 08:00,2015-05-23 16:00,,2014-10-08 10:00,2014-10-22 16:00,2014-10-08 10:00,2014-10-22 16:00,2014-10-08 10:00,2014-10-22 16:00,2015-05-10 08:00,2015-05-23 16:00,,PT_Normal,,,,,6x8w36xdK02BnKRlg25OVA,YUj8lTXbQ0iofIzBpxeU/g,,,N,0,0,,,2014-04-05 12:27,2014-04-05 13:21,admin,admin,
317,140060,1749,36382,642,0,N,N,N,CP_Drtn,TT_Task,DT_FixedDUR2,TK_NotStart,BL2-MEP-FF-B2-2000,Fire Fighting Pipes and Fittings Installation,,1096,0,168,0,1008,1008,168,307.83721,0,307.83721,,,,2015-05-24 08:00,2015-06-14 16:00,,2014-12-13 08:00,2015-01-07 16:00,2014-12-13 08:00,2015-01-07 16:00,2014-12-13 08:00,2015-01-07 16:00,2015-05-24 08:00,2015-06-14 16:00,,PT_Normal,,,,,rTuaS9xBCEWtY/i0pWNYKg,JczN7AYacUmyMIDvminXcw,,,N,0,0,,,2014-04-05 12:27,2014-04-05 13:21,admin,admin,
318,140061,1749,36382,642,0,N,N,N,CP_Drtn,TT_Task,DT_FixedDUR2,TK_NotStart,BL2-MEP-FF-B2-2010,Fire Fighting Pipes Pressure Test,4456,1144,248,48,0,96,96,48,41.857235,0,41.857235,,,,2015-06-21 08:00,2015-06-26 16:00,,2015-01-08 08:00,2015-01-14 16:00,2015-01-08 08:00,2015-01-14 16:00,2015-01-08 08:00,2015-01-14 16:00,2015-06-21 08:00,2015-06-26 16:00,,PT_Normal,,,,,/aP69TelDEKGIM0MbTYUCQ,9NjMBtgk6UaSMxKlbBTzBw,,,N,0,0,,,2014-04-05 12:27,2014-04-05 13:21,admin,admin,
319,140062,1749,36416,642,0,N,N,N,CP_Drtn,TT_Task,DT_FixedDUR2,TK_NotStart,BL2-MEP-AC-9F-1010,Supports and Hungers Fixing,,200,0,144,0,192,192,144,997.381104,0,997.381104,,,,2015-10-19 08:00,2015-11-05 16:00,,2015-09-24 08:00,2015-10-11 16:00,2015-09-24 08:00,2015-10-11 16:00,2015-09-24 08:00,2015-10-11 16:00,2015-10-19 08:00,2015-11-05 16:00,,PT_Normal,,,,,jHbhdriXmkec6lkt/HoeLg,3rx8PCHpd0W8Jitfx6922w,,,N,0,0,,,2014-04-05 12:27,2014-04-05 13:21,admin,admin,
320,140063,1749,36416,642,0,N,N,N,CP_Drtn,TT_FinMile,DT_FixedDrtn,TK_NotStart,BL2-MEP-AC-9F-1000,Foundation for MEP Equipments ready,,200,0,0,0,0,0,0,0,0,0,,,,2015-10-18 16:00,2015-10-18 16:00,,2015-09-23 16:00,2015-09-23 16:00,2015-09-23 16:00,2015-09-23 16:00,2015-09-23 16:00,2015-09-23 16:00,2015-10-18 16:00,2015-10-18 16:00,,PT_Normal,,,,,MNBeenmWbEa5di/W9H7IoA,Zgdrb0Q6TUmrIVuIZ/Bm9A,,,N,0,0,,,2014-04-05 12:27,2014-04-05 12:27,admin,admin,
321,140064,1749,36517,642,0,N,N,N,CP_Drtn,TT_Task,DT_FixedDUR2,TK_NotStart,BL2-MEP-AC-9F-2040,Duct Installation and Insulation,4454,216,0,240,0,960,960,240,5579.653981,0,5579.653981,,,,2015-11-29 08:00,2015-12-28 16:00,,2015-11-02 08:00,2015-12-01 16:00,2015-11-02 08:00,2015-12-01 16:00,2015-11-02 08:00,2015-12-01 16:00,2015-11-29 08:00,2015-12-28 16:00,,PT_Normal,,,,,mbaOwUC03E6/T82tWkfI7w,chIhzZAk+E2d3eyX6JcN4A,,,N,0,0,,,2014-04-05 12:27,2014-04-05 13:21,admin,admin,
322,140065,1749,36517,642,0,N,N,N,CP_Drtn,TT_Task,DT_FixedDUR2,TK_NotStart,BL2-MEP-AC-9F-2070,Extract and Fresh Fan's Installation,4457,216,16,200,0,800,800,200,159205.335444,0,159205.335444,,,,2015-12-29 08:00,2016-01-22 16:00,,2015-12-02 08:00,2015-12-26 16:00,2015-12-02 08:00,2015-12-26 16:00,2015-12-02 08:00,2015-12-26 16:00,2015-12-29 08:00,2016-01-22 16:00,,PT_Normal,,,,,pMJqbP+CJ0i6S8t4tOoSug,050X4Lz3hEqmPALNACMeIQ,,,N,0,0,,,2014-04-05 12:27,2014-04-05 13:21,admin,admin,
323,140066,1749,36517,642,0,N,N,N,CP_Drtn,TT_Task,DT_FixedDUR2,TK_NotStart,BL2-MEP-AC-9F-2000,Heat Pumps Installation,4457,200,0,168,0,252,252,168,209079.473369,0,209079.473369,,,,2015-11-06 08:00,2015-11-26 16:00,,2015-10-12 08:00,2015-11-01 16:00,2015-10-12 08:00,2015-11-01 16:00,2015-10-12 08:00,2015-11-01 16:00,2015-11-06 08:00,2015-11-26 16:00,,PT_Normal,,,,,riBPMO9y30GPS5P/NLQv2Q,CW+tLMJW1kOHZHVOmdzYJw,,,N,0,0,,,2014-04-05 12:27,2014-04-05 13:21,admin,admin,
324,140067,1749,36517,642,0,N,N,N,CP_Drtn,TT_Task,DT_FixedDUR2,TK_NotStart,BL2-MEP-AC-9F-2050,Chilled Water Pipes and Fittings Installation and Final Connection,4457,200,0,240,0,480,480,240,14894.751805,0,14894.751805,,,,2015-11-27 08:00,2015-12-26 16:00,,2015-11-02 08:00,2015-12-01 16:00,2015-11-02 08:00,2015-12-01 16:00,2015-11-02 08:00,2015-12-01 16:00,2015-11-27 08:00,2015-12-26 16:00,,PT_Normal,,,,,/S0VePHsQU6QesL/2giyGA,XczPfR4Mikqz3B5609qbGA,,,N,0,0,,,2014-04-05 12:27,2014-04-05 13:21,admin,admin,
325,140068,1749,36517,642,0,N,N,N,CP_Drtn,TT_Task,DT_FixedDUR2,TK_NotStart,BL2-MEP-AC-9F-2080,Chilled Water Pipes Pressure Test,4457,200,0,48,0,48,48,48,1657.634495,0,1657.634495,,,,2015-12-27 08:00,2016-01-01 16:00,,2015-12-02 08:00,2015-12-07 16:00,2015-12-02 08:00,2015-12-07 16:00,2015-12-02 08:00,2015-12-07 16:00,2015-12-27 08:00,2016-01-01 16:00,,PT_Normal,,,,,hQQTGftEF0a17SrGIyCiQQ,O385jyyBOEaOX77cjzOaeQ,,,N,0,0,,,2014-04-05 12:27,2014-04-05 13:21,admin,admin,
326,140069,1749,36517,642,0,N,N,N,CP_Drtn,TT_Task,DT_FixedDUR2,TK_NotStart,BL2-MEP-AC-9F-2090,Chilled Water Pipes Insulation,4457,392,24,144,0,288,288,144,4735.505642,0,4735.505642,,,,2016-01-26 08:00,2016-02-12 16:00,,2015-12-08 08:00,2015-12-25 16:00,2015-12-08 08:00,2015-12-25 16:00,2015-12-08 08:00,2015-12-25 16:00,2016-01-26 08:00,2016-02-12 16:00,,PT_Normal,,,,,uLD8Lx2cqU6jCHci4TCiFw,0HEpfUIRRUazHqAmsRwugA,,,N,0,0,,,2014-04-05 12:27,2014-04-05 13:21,admin,admin,
327,140070,1749,36517,642,0,N,N,N,CP_Drtn,TT_Task,DT_FixedDUR2,TK_NotStart,BL2-MEP-AC-9F-2100,Chilled Water Pumps Installation and Final Connection,4457,200,0,168,0,336,336,168,164179.23759,0,164179.23759,,,,2016-01-02 08:00,2016-01-22 16:00,,2015-12-08 08:00,2015-12-28 16:00,2015-12-08 08:00,2015-12-28 16:00,2015-12-08 08:00,2015-12-28 16:00,2016-01-02 08:00,2016-01-22 16:00,,PT_Normal,,,,,Vm5vtqa0QE+SVrbbbjg/yg,ME5dus/ZZk6zzsyjNf1Z9g,,,N,0,0,,,2014-04-05 12:27,2014-04-05 13:21,admin,admin,
328,140071,1749,36517,642,0,N,N,N,CP_Drtn,TT_Task,DT_FixedDUR2,TK_NotStart,BL2-MEP-AC-9F-2010,AHU's Installation,4457,216,0,168,0,252,252,168,119921.723891,0,119921.723891,,,,2015-11-08 08:00,2015-11-28 16:00,,2015-10-12 08:00,2015-11-01 16:00,2015-10-12 08:00,2015-11-01 16:00,2015-10-12 08:00,2015-11-01 16:00,2015-11-08 08:00,2015-11-28 16:00,,PT_Normal,,,,,jIHBRXL+SEG2UHktt2oL5g,g4HsY4wHAUa2YIvB6S55hg,,,N,0,0,,,2014-04-05 12:27,2014-04-05 13:21,admin,admin,
329,140072,1749,36517,642,0,N,N,N,CP_Drtn,TT_Task,DT_FixedDUR2,TK_NotStart,BL2-MEP-AC-9F-2020,Pressurization Units Installation,4457,216,0,168,0,252,252,168,14039.948981,0,14039.948981,,,,2015-11-08 08:00,2015-11-28 16:00,,2015-10-12 08:00,2015-11-01 16:00,2015-10-12 08:00,2015-11-01 16:00,2015-10-12 08:00,2015-11-01 16:00,2015-11-08 08:00,2015-11-28 16:00,,PT_Normal,,,,,yMI4no4AMEuPCr11wvhwAw,/pFhxQDxskKUKo4kfMhacA,,,N,0,0,,,2014-04-05 12:27,2014-04-05 13:21,admin,admin,
330,140073,1749,36517,642,0,N,N,N,CP_Drtn,TT_Task,DT_FixedDUR2,TK_NotStart,BL2-MEP-AC-9F-2030,Chemical Treatment Unit Installation,4457,712,512,112,0,168,168,112,45470.379536,0,45470.379536,,,,2016-01-09 08:00,2016-01-22 16:00,,2015-10-12 08:00,2015-10-25 16:00,2015-10-12 08:00,2015-10-25 16:00,2015-10-12 08:00,2015-10-25 16:00,2016-01-09 08:00,2016-01-22 16:00,,PT_Normal,,,,,Rmn0x4Osc0yPnK9pFbw+jQ,Vi6VHt5gSk6PDXtJUVIWFQ,,,N,0,0,,,2014-04-05 12:27,2014-04-05 13:21,admin,admin,
331,140074,1749,36517,642,0,N,N,N,CP_Drtn,TT_Task,DT_FixedDUR2,TK_NotStart,BL2-MEP-AC-9F-2060,BTU Meter Installation,4457,608,408,48,0,48,48,48,17902.026766,0,17902.026766,,,,2016-01-17 08:00,2016-01-22 16:00,,2015-11-02 08:00,2015-11-07 16:00,2015-11-02 08:00,2015-11-07 16:00,2015-11-02 08:00,2015-11-07 16:00,2016-01-17 08:00,2016-01-22 16:00,,PT_Normal,,,,,wTDLQxQXIkKxHDIzcIPYcg,p22ZVBHQzEmQxShx+OCuRA,,,N,0,0,,,2014-04-05 12:27,2014-04-05 13:21,admin,admin,
332,140075,1749,36360,642,0,N,N,N,CP_Drtn,TT_Task,DT_FixedDUR2,TK_NotStart,BL2-MEP-PL-9F-3000,Vent Pipes Installation,,976,128,112,0,383.862,383.862,112,985.628747,0,985.628747,,,,2015-12-25 08:00,2016-01-07 16:00,,2015-08-25 08:00,2015-09-07 16:00,2015-08-25 08:00,2015-09-07 16:00,2015-08-25 08:00,2015-09-07 16:00,2015-12-25 08:00,2016-01-07 16:00,,PT_Normal,,,,,l9xN3PxJdE6BQSW9yylCcQ,vxbNnhWa6UuG3XYph1P7MQ,,,N,0,0,,,2014-04-05 12:27,2014-04-05 13:21,admin,admin,
333,140076,1749,36360,642,0,N,N,N,CP_Drtn,TT_Task,DT_FixedDUR2,TK_NotStart,BL2-MEP-PL-9F-3010,Rain Outlet Installation,,1064,576,48,0,36.45,36.45,48,450.468469,0,450.468469,,,,2016-02-04 08:00,2016-02-09 16:00,,2015-09-24 08:00,2015-09-29 16:00,2015-09-24 08:00,2015-09-29 16:00,2015-09-24 08:00,2015-09-29 16:00,2016-02-04 08:00,2016-02-09 16:00,,PT_Normal,,,,,2zq6H/z31UW3TeNfkVBFNA,IY5mSuoqo0KcTI6Xkcx9gQ,,,N,0,0,,,2014-04-05 12:27,2014-04-05 13:21,admin,admin,
334,140077,1749,36360,642,0,N,N,N,CP_Drtn,TT_Task,DT_FixedDUR2,TK_NotStart,BL2-MEP-PL-9F-3020,Pip Tap Fixing,4456,848,576,32,0,8,8,32,128.037712,0,128.037712,,,,2016-01-08 08:00,2016-01-11 16:00,,2015-09-24 08:00,2015-09-27 16:00,2015-09-24 08:00,2015-09-27 16:00,2015-09-24 08:00,2015-09-27 16:00,2016-01-08 08:00,2016-01-11 16:00,,PT_Normal,,,,,AmRvxcGgoEqMlIPcxvQCKw,dPPJqax45kubULIK2GyRVQ,,,N,0,0,,,2014-04-05 12:27,2014-04-05 13:21,admin,admin,
335,140078,1749,36630,642,0,N,N,N,CP_Drtn,TT_Task,DT_FixedDUR2,TK_NotStart,BL2-MEP-FF-9F-3000,Fire Extinguisher Installation,,680,192,16,0,8,8,16,1076.993507,0,1076.993507,,,,2016-02-11 08:00,2016-02-12 16:00,,2015-11-18 08:00,2015-11-19 16:00,2015-11-18 08:00,2015-11-19 16:00,2015-11-18 08:00,2015-11-19 16:00,2016-02-11 08:00,2016-02-12 16:00,,PT_Normal,,,,,zLkSoWoj60+V37cFHbmlWA,M2PWqhQ2G02kmAx0nUVphw,,,N,0,0,,,2014-04-05 12:27,2014-04-05 13:21,admin,admin,
336,140079,1749,36318,642,0,N,N,N,CP_Drtn,TT_Task,DT_FixedDUR2,TK_NotStart,BL2-MEP-EL-9F-2040,SMDB's  Installation,,1080,336,48,0,45,45,48,4202.598932,0,4202.598932,,,,2016-01-28 08:00,2016-02-02 16:00,,2015-09-15 08:00,2015-09-20 16:00,2015-09-15 08:00,2015-09-20 16:00,2015-09-15 08:00,2015-09-20 16:00,2016-01-28 08:00,2016-02-02 16:00,,PT_Normal,,,,,8s8JEicXn0C3Muq6B6Et/w,C5T+83ASJkKeZ3ZHO1w4Gg,,,N,0,0,,,2014-04-05 12:27,2014-04-05 13:21,admin,admin,
337,140080,1749,36318,642,0,N,N,N,CP_Drtn,TT_Task,DT_FixedDUR2,TK_NotStart,BL2-MEP-EL-9F-2000,Lighting  Wiring,,992,48,96,0,241.713,241.713,96,3578.08423,0,3578.08423,,,,2016-01-08 08:00,2016-01-19 16:00,,2015-09-06 08:00,2015-09-17 16:00,2015-09-06 08:00,2015-09-17 16:00,2015-09-06 08:00,2015-09-17 16:00,2016-01-08 08:00,2016-01-19 16:00,,PT_Normal,,,,,EXpjW9kyZ0O7Rw7DxNrp5A,wXGutaLIp0ObqNj0lCEYbQ,,,N,0,0,,,2014-04-05 12:27,2014-04-05 13:21,admin,admin,
338,140081,1749,36318,642,0,N,N,N,CP_Drtn,TT_Task,DT_FixedDUR2,TK_NotStart,BL2-MEP-EL-9F-2010,Power Points Wiring,,992,160,96,0,192,192,96,2906.213289,0,2906.213289,,,,2016-01-08 08:00,2016-01-19 16:00,,2015-09-06 08:00,2015-09-17 16:00,2015-09-06 08:00,2015-09-17 16:00,2015-09-06 08:00,2015-09-17 16:00,2016-01-08 08:00,2016-01-19 16:00,,PT_Normal,,,,,w3J1dmpifkCfdnX6bjzofg,Hlb/ZvHsPkOlAe+U1hmTTg,,,N,0,0,,,2014-04-05 12:27,2014-04-05 13:21,admin,admin,
339,140082,1749,36318,642,0,N,N,N,CP_Drtn,TT_Task,DT_FixedDUR2,TK_NotStart,BL2-MEP-EL-9F-2050,Cable Tray and Trunking Installation,,832,0,112,0,336,336,112,9078.448617,0,9078.448617,,,,2016-01-06 08:00,2016-01-19 16:00,,2015-09-24 08:00,2015-10-07 16:00,2015-09-24 08:00,2015-10-07 16:00,2015-09-24 08:00,2015-10-07 16:00,2016-01-06 08:00,2016-01-19 16:00,,PT_Normal,,,,,FAmOqzebvUKQr8nBFXag1A,Fqxp6K11ZkKZ+BLyPROn4A,,,N,0,0,,,2014-04-05 12:27,2014-04-05 13:21,admin,admin,
340,140083,1749,36318,642,0,N,N,N,CP_Drtn,TT_Task,DT_FixedDUR2,TK_NotStart,BL2-MEP-EL-9F-2020,Fire Alarm System Wiring,,1120,408,96,0,192,192,96,7123.009694,0,7123.009694,,,,2016-01-24 08:00,2016-02-04 16:00,,2015-09-06 08:00,2015-09-17 16:00,2015-09-06 08:00,2015-09-17 16:00,2015-09-06 08:00,2015-09-17 16:00,2016-01-24 08:00,2016-02-04 16:00,,PT_Normal,,,,,Ie5CU91U1kGbcgMDwFofZw,AdaDu7Y+J06GBGLM8BwNZw,,,N,0,0,,,2014-04-05 12:27,2014-04-05 13:21,admin,admin,
341,140084,1749,36318,642,0,N,N,N,CP_Drtn,TT_Task,DT_FixedDUR2,TK_NotStart,BL2-MEP-EL-9F-2030,Lighting Protection,4455,1368,688,40,0,160,160,40,46.345904,0,46.345904,,,,2016-02-12 08:00,2016-02-16 16:00,,2015-08-25 08:00,2015-08-29 16:00,2015-08-25 08:00,2015-08-29 16:00,2015-08-25 08:00,2015-08-29 16:00,2016-02-12 08:00,2016-02-16 16:00,,PT_Normal,,,,,pKsJhdRagUaa8o0EhO9Tgw,LoWS9Ch8DUOn+LyLu4c2nQ,,,N,0,0,,,2014-04-05 12:27,2014-04-05 13:21,admin,admin,
342,140085,1749,36224,642,0,N,N,N,CP_Drtn,TT_Task,DT_FixedDUR2,TK_NotStart,BL2-MEP-EL-9F-1000,PVC Back Boxes and Conduits  Fixing in Wall,,200,0,96,0,384,384,96,3319.67233,0,3319.67233,,,,2015-08-23 08:00,2015-09-03 16:00,,2015-07-29 08:00,2015-08-09 16:00,2015-07-29 08:00,2015-08-09 16:00,2015-07-29 08:00,2015-08-09 16:00,2015-08-23 08:00,2015-09-03 16:00,,PT_Normal,,,,,8P7ByIykv02yIU0Jij804g,s9KYJpO7bka7oA3DIqUFyw,,,N,0,0,,,2014-04-05 12:27,2014-04-05 13:21,admin,admin,
343,140086,1749,36216,642,0,N,N,N,CP_Drtn,TT_Task,DT_FixedDUR2,TK_NotStart,BL2-MEP-EL-9F-3040,Lights Fitting Fixing,,680,0,112,0,244,244,112,7336.659378,0,7336.659378,,,,2016-02-03 08:00,2016-02-16 16:00,,2015-11-10 08:00,2015-11-23 16:00,2015-11-10 08:00,2015-11-23 16:00,2015-11-10 08:00,2015-11-23 16:00,2016-02-03 08:00,2016-02-16 16:00,,PT_Normal,,,,,6OxEo/Xtp0mRcZykTHTZ5A,TPggJ2W+70CKVCzmkkoFwQ,,,N,0,0,,,2014-04-05 12:27,2014-04-05 13:21,admin,admin,
344,140087,1749,36216,642,0,N,N,N,CP_Drtn,TT_Task,DT_FixedDUR2,TK_NotStart,BL2-MEP-EL-9F-3050,Sockets and Switches Fixing,,776,96,64,0,128,128,64,1174.957134,0,1174.957134,,,,2016-02-09 08:00,2016-02-16 16:00,,2015-11-04 08:00,2015-11-11 16:00,2015-11-04 08:00,2015-11-11 16:00,2015-11-04 08:00,2015-11-11 16:00,2016-02-09 08:00,2016-02-16 16:00,,PT_Normal,,,,,I2DGxN5LLEm1ljhyUp56Fg,qNNP4n602EmITfbzpGbDNg,,,N,0,0,,,2014-04-05 12:27,2014-04-05 13:21,admin,admin,
345,140088,1749,36216,642,0,N,N,N,CP_Drtn,TT_Task,DT_FixedDUR2,TK_NotStart,BL2-MEP-EL-9F-3020,Fire Alarm System Detector Installation,,712,32,96,0,192,192,96,4046.378277,0,4046.378277,,,,2016-02-05 08:00,2016-02-16 16:00,,2015-11-08 08:00,2015-11-19 16:00,2015-11-08 08:00,2015-11-19 16:00,2015-11-08 08:00,2015-11-19 16:00,2016-02-05 08:00,2016-02-16 16:00,,PT_Normal,,,,,16JlDxei/06GWmYNbN7Wzw,J1IrPdNLTE2PkSaBjPxszA,,,N,0,0,,,2014-04-05 12:27,2014-04-05 13:21,admin,admin,
346,140089,1749,36216,642,0,N,N,N,CP_Drtn,TT_Task,DT_FixedDUR2,TK_NotStart,BL2-MEP-EL-9F-3010,SMDB's  Termination and Final Connection,,744,128,48,0,192,192,48,2791.825001,0,2791.825001,,,,2016-02-03 08:00,2016-02-08 16:00,,2015-11-02 08:00,2015-11-07 16:00,2015-11-02 08:00,2015-11-07 16:00,2015-11-02 08:00,2015-11-07 16:00,2016-02-03 08:00,2016-02-08 16:00,,PT_Normal,,,,,8G+9NxlxYEmeqRuY48z2wg,Z4YAPS4o+UK+MhHo8DJQyQ,,,N,0,0,,,2014-04-05 12:27,2014-04-05 13:21,admin,admin,
347,140090,1749,36318,642,0,N,N,N,CP_Drtn,TT_Task,DT_FixedDUR2,TK_NotStart,BL2-MEP-EL-9F-3030,Power Cable Puling,,832,88,112,0,168,168,112,6375.759893,0,6375.759893,,,,2016-01-20 08:00,2016-02-02 16:00,,2015-10-08 08:00,2015-10-21 16:00,2015-10-08 08:00,2015-10-21 16:00,2015-10-08 08:00,2015-10-21 16:00,2016-01-20 08:00,2016-02-02 16:00,,PT_Normal,,,,,rgeEWMJUu0eXAlrGO8rNug,vLhGJqjTO0aEZuXOI/REFQ,,,N,0,0,,,2014-04-05 12:27,2014-04-05 13:21,admin,admin,
348,140091,1749,36216,642,0,N,N,N,CP_Drtn,TT_Task,DT_FixedDUR2,TK_NotStart,BL2-MEP-EL-9F-3060,Equipments Panels Installation and Termination,4455,200,0,168,0,1008,1008,168,133402.638622,0,133402.638622,,,,2016-01-23 08:00,2016-02-12 16:00,,2015-12-29 08:00,2016-01-18 16:00,2015-12-29 08:00,2016-01-18 16:00,2015-12-29 08:00,2016-01-18 16:00,2016-01-23 08:00,2016-02-12 16:00,,PT_Normal,,,,,s+LQKfD+ZE65710vVmSPnQ,zNCjkbrCW0an3rrP3rccJg,,,N,0,0,,,2014-04-05 12:27,2014-04-05 13:21,admin,admin,
349,140092,1749,36216,642,0,N,N,N,CP_Drtn,TT_Task,DT_FixedDUR2,TK_NotStart,BL2-MEP-EL-9F-3000,Air Craft Lights Installation,4455,1088,408,80,0,160,160,80,92.691808,0,92.691808,,,,2016-02-07 08:00,2016-02-16 16:00,,2015-09-24 08:00,2015-10-03 16:00,2015-09-24 08:00,2015-10-03 16:00,2015-09-24 08:00,2015-10-03 16:00,2016-02-07 08:00,2016-02-16 16:00,,PT_Normal,,,,,RGkNBn459U2mRWRbOLgrGQ,EHFU+XrS0USh5RuqGAN9NQ,,,N,0,0,,,2014-04-05 12:27,2014-04-05 13:21,admin,admin,
350,140093,1749,36434,642,0,N,N,N,CP_Drtn,TT_Task,DT_FixedDUR2,TK_NotStart,BL2-MEP-AC-B1-1000,Supports and Hungers Fixing,,800,152,96,0,192,192,96,130.114912,0,130.114912,,,,2015-03-23 08:00,2015-04-05 16:00,,2014-11-24 08:00,2014-12-07 16:00,2014-11-24 08:00,2014-12-07 16:00,2014-11-24 08:00,2014-12-07 16:00,2015-03-23 08:00,2015-04-05 16:00,,PT_Normal,,,,,DLEO7wvFpEGzVHj2FIE9IA,bWK7IeF/uUqRfZWgg/1PGQ,,,N,0,0,,,2014-04-05 12:27,2014-04-05 13:21,admin,admin,
351,140094,1749,36535,642,0,N,N,N,CP_Drtn,TT_Task,DT_FixedDUR2,TK_NotStart,BL2-MEP-AC-B1-2000,Fresh Air Duct and Extract Duct Installation,4454,496,0,168,0,1008,1008,168,2029.377292,0,2029.377292,,,,2015-04-06 08:00,2015-04-29 16:00,,2015-01-24 08:00,2015-02-16 16:00,2015-01-24 08:00,2015-02-16 16:00,2015-01-24 08:00,2015-02-16 16:00,2015-04-06 08:00,2015-04-29 16:00,,PT_Normal,,,,,z214VafyUE+IRe7oxPlIig,6OuIA5Qa20S6rQdzeqzRkQ,,,N,0,0,,,2014-04-05 12:27,2014-04-05 13:21,admin,admin,
352,140095,1749,36535,642,0,N,N,N,CP_Drtn,TT_Task,DT_FixedDUR2,TK_NotStart,BL2-MEP-AC-B1-2010,Duct Accessories Installation,4457,928,64,112,0,448,448,112,250.167804,0,250.167804,,,,2015-06-28 08:00,2015-07-11 16:00,,2015-02-17 08:00,2015-03-04 16:00,2015-02-17 08:00,2015-03-04 16:00,2015-02-17 08:00,2015-03-04 16:00,2015-06-28 08:00,2015-07-11 16:00,,PT_Normal,,,,,nOG9dyNO2keopOJmUyszdA,xYInwwYXjUKpxXnwUCa4cQ,,,N,0,0,,,2014-04-05 12:27,2014-04-05 13:21,admin,admin,
353,140096,1749,36332,642,0,N,N,N,CP_Drtn,TT_Task,DT_FixedDUR2,TK_NotStart,BL2-MEP-AC-B1-3000,Grills and Diffusers Fixing,,1248,0,80,0,320,320,80,426.81116,0,426.81116,,,,2015-10-18 08:00,2015-10-27 16:00,,2015-05-12 08:00,2015-05-23 16:00,2015-05-12 08:00,2015-05-23 16:00,2015-05-12 08:00,2015-05-23 16:00,2015-10-18 08:00,2015-10-27 16:00,,PT_Normal,,,,,wlk1E25LGUOhNLsps9+m0Q,Jo8R8sIaP06m9LVD7mNjfg,,,N,0,0,,,2014-04-05 12:27,2014-04-05 13:21,admin,admin,
354,140097,1749,36538,642,0,N,N,N,CP_Drtn,TT_Task,DT_FixedDUR2,TK_NotStart,BL2-MEP-PL-B1-1000,Low Level Water Supply Pipes Installation,,672,176,96,0,42,42,96,725.216846,0,725.216846,,,,2015-03-01 08:00,2015-03-14 16:00,,2014-11-20 08:00,2014-12-03 16:00,2014-11-20 08:00,2014-12-03 16:00,2014-11-20 08:00,2014-12-03 16:00,2015-03-01 08:00,2015-03-14 16:00,,PT_Normal,,,,,cLERxGnRh0eaoE0HGEymCQ,fx2itTwwJ0yCaAVveYQsig,,,N,0,0,,,2014-04-05 12:27,2014-04-05 13:21,admin,admin,
355,140098,1749,36538,642,0,N,N,N,CP_Drtn,TT_Task,DT_FixedDUR2,TK_NotStart,BL2-MEP-PL-B1-1010,Low Level Drainage Pipes Installation,,648,152,96,0,12.67,12.67,96,94.429262,0,94.429262,,,,2015-03-01 08:00,2015-03-14 16:00,,2014-11-24 08:00,2014-12-07 16:00,2014-11-24 08:00,2014-12-07 16:00,2014-11-24 08:00,2014-12-07 16:00,2015-03-01 08:00,2015-03-14 16:00,,PT_Normal,,,,,KCT7jwTQjU6SsU+ayefKTQ,EPS1l1Pn+kSSTwpk66+opA,,,N,0,0,,,2014-04-05 12:27,2014-04-05 13:21,admin,admin,
356,140099,1749,36538,642,0,N,N,N,CP_Drtn,TT_Task,DT_FixedDUR2,TK_NotStart,BL2-MEP-PL-B1-1020,Supports  installation for High level Pipes,,864,176,96,0,16.352,16.352,96,831.682549,0,831.682549,,,,2015-04-01 08:00,2015-04-14 16:00,,2014-11-24 08:00,2014-12-07 16:00,2014-11-24 08:00,2014-12-07 16:00,2014-11-24 08:00,2014-12-07 16:00,2015-04-01 08:00,2015-04-14 16:00,,PT_Normal,,,,,whslVodF9kWaDzxhYFtGTA,eTc1hMzLikWdA++bnCKI+A,,,N,0,0,,,2014-04-05 12:27,2014-04-05 13:21,admin,admin,
357,140100,1749,36539,642,0,N,N,N,CP_Drtn,TT_Task,DT_FixedDUR2,TK_NotStart,BL2-MEP-PL-B1-3010,Sanitary Ware Installation Including Connection,,840,0,96,0,383.862,383.862,96,4451.516455,0,4451.516455,,,,2015-08-28 08:00,2015-09-08 16:00,,2015-05-12 08:00,2015-05-25 16:00,2015-05-12 08:00,2015-05-25 16:00,2015-05-12 08:00,2015-05-25 16:00,2015-08-28 08:00,2015-09-08 16:00,,PT_Normal,,,,,m7/QNjxh1kWa7GGBnekRqg,2OfhQ0zqIUODtv8QL3G5QQ,,,N,0,0,,,2014-04-05 12:27,2014-04-05 13:21,admin,admin,
358,140101,1749,36539,642,0,N,N,N,CP_Drtn,TT_Task,DT_FixedDUR2,TK_NotStart,BL2-MEP-PL-B1-3020,Sanitary Ware Accessories Installation,,1416,200,48,0,36.45,36.45,48,166.215378,0,166.215378,,,,2015-11-20 08:00,2015-11-25 16:00,,2015-05-26 08:00,2015-06-01 16:00,2015-05-26 08:00,2015-06-01 16:00,2015-05-26 08:00,2015-06-01 16:00,2015-11-20 08:00,2015-11-25 16:00,,PT_Normal,,,,,MsvqNNv8E0WXd37VH/gxeA,QrC/2O76/kWAUIRA0OH22A,,,N,0,0,,,2014-04-05 12:27,2014-04-05 13:21,admin,admin,
359,140102,1749,36540,642,0,N,N,N,CP_Drtn,TT_Task,DT_FixedDUR2,TK_NotStart,BL2-MEP-PL-B1-3000,Manhole Covers  Installation,,2408,1920,48,0,37.5,37.5,48,494.574212,0,494.574212,,,,2016-02-04 08:00,2016-02-09 16:00,,2015-03-31 08:00,2015-04-06 16:00,2015-03-31 08:00,2015-04-06 16:00,2015-03-31 08:00,2015-04-06 16:00,2016-02-04 08:00,2016-02-09 16:00,,PT_Normal,,,,,RCEUrSOt0UK/xCaToUQJTw,wfcCvHsEgkWQbDPRUxGniA,,,N,0,0,,,2014-04-05 12:27,2014-04-05 13:21,admin,admin,
360,140103,1749,36540,642,0,N,N,N,CP_Drtn,TT_Task,DT_FixedDUR2,TK_NotStart,BL2-MEP-PL-B1-2030,Parking Drain Installation,,752,0,48,0,48,48,48,553.83323,0,553.83323,,,,2015-06-30 08:00,2015-07-05 16:00,,2015-03-17 08:00,2015-03-23 16:00,2015-03-17 08:00,2015-03-23 16:00,2015-03-17 08:00,2015-03-23 16:00,2015-06-30 08:00,2015-07-05 16:00,,PT_Normal,,,,,szdHLYxJ402HqwvrBwlB0g,RQl+OUGBc06LXGWDCynIVA,,,N,0,0,,,2014-04-05 12:27,2014-04-05 13:21,admin,admin,
361,140104,1749,36540,642,0,N,N,N,CP_Drtn,TT_Task,DT_FixedDUR2,TK_NotStart,BL2-MEP-PL-B1-2010,High Level Water Supply Pipes and Fittings Installation,,560,0,168,0,150.02,150.02,168,1329.597866,0,1329.597866,,,,2015-04-15 08:00,2015-05-09 16:00,,2015-01-24 08:00,2015-02-16 16:00,2015-01-24 08:00,2015-02-16 16:00,2015-01-24 08:00,2015-02-16 16:00,2015-04-15 08:00,2015-05-09 16:00,,PT_Normal,,,,,+6OVeYXaak+ywpL7mRuLqQ,xFv394pFc0SU/jj5iMC64g,,,N,0,0,,,2014-04-05 12:27,2014-04-05 13:21,admin,admin,
362,140105,1749,36540,642,0,N,N,N,CP_Drtn,TT_Task,DT_FixedDUR2,TK_NotStart,BL2-MEP-PL-B1-2000,High Level Drainage Pipes Installation,,560,8,168,0,244.38,244.38,168,6583.525267,0,6583.525267,,,,2015-04-15 08:00,2015-05-09 16:00,,2015-01-24 08:00,2015-02-16 16:00,2015-01-24 08:00,2015-02-16 16:00,2015-01-24 08:00,2015-02-16 16:00,2015-04-15 08:00,2015-05-09 16:00,,PT_Normal,,,,,pMIZL/eDTUKKCa3+h4cA+Q,yoPuhaf9oUKLgU9fHyM/1Q,,,N,0,0,,,2014-04-05 12:27,2014-04-05 13:21,admin,admin,
363,140106,1749,36540,642,0,N,N,N,CP_Drtn,TT_Task,DT_FixedDUR2,TK_NotStart,BL2-MEP-PL-B1-2020,Water Supply Pipes Pressure Test,4456,992,128,48,0,48,48,48,151.744312,0,151.744312,,,,2015-07-06 08:00,2015-07-11 16:00,,2015-02-17 08:00,2015-02-23 16:00,2015-02-17 08:00,2015-02-23 16:00,2015-02-17 08:00,2015-02-23 16:00,2015-07-06 08:00,2015-07-11 16:00,,PT_Normal,,,,,KVIdLaGOHEC2NPfcLr7Sag,HXZSo9HXjk2TYlhbq+ISqQ,,,N,0,0,,,2014-04-05 12:27,2014-04-05 13:21,admin,admin,
364,140107,1749,36540,642,0,N,N,N,CP_Drtn,TT_Task,DT_FixedDUR2,TK_NotStart,BL2-MEP-PL-B1-2040,Drainage Pipes Gravity Test,,752,0,48,0,48,48,48,826.240719,0,826.240719,,,,2015-07-06 08:00,2015-07-11 16:00,,2015-03-24 08:00,2015-03-30 16:00,2015-03-24 08:00,2015-03-30 16:00,2015-03-24 08:00,2015-03-30 16:00,2015-07-06 08:00,2015-07-11 16:00,,PT_Normal,,,,,MNm+6XqIEkm5n6YV7QS8Zg,gOjgUAuUGUWl6htVSuJK7A,,,N,0,0,,,2014-04-05 12:27,2014-04-05 13:21,admin,admin,
365,140108,1749,36542,642,0,N,N,N,CP_Drtn,TT_Task,DT_FixedDUR2,TK_NotStart,BL2-MEP-FF-B1-3000,Fire Extinguisher Installation,,1104,32,16,0,8,8,16,1076.993507,0,1076.993507,,,,2016-01-24 08:00,2016-01-25 16:00,,2015-09-08 08:00,2015-09-09 16:00,2015-09-08 08:00,2015-09-09 16:00,2015-09-08 08:00,2015-09-09 16:00,2016-01-24 08:00,2016-01-25 16:00,,PT_Normal,,,,,kbNDAc6qdUaebag0+ZLdSw,32laaAvte0WSaILwvx8msQ,,,N,0,0,,,2014-04-05 12:27,2014-04-05 13:21,admin,admin,
366,140109,1749,36542,642,0,N,N,N,CP_Drtn,TT_Task,DT_FixedDUR2,TK_NotStart,BL2-MEP-FF-B1-3010,Hose reel Cabinet Installation and Connection,,792,0,48,0,192,192,48,1336.852298,0,1336.852298,,,,2015-12-15 08:00,2015-12-20 16:00,,2015-09-07 08:00,2015-09-12 16:00,2015-09-07 08:00,2015-09-12 16:00,2015-09-07 08:00,2015-09-12 16:00,2015-12-15 08:00,2015-12-20 16:00,,PT_Normal,,,,,BIbjjcE23Ey6Pb89WEqXcQ,/4JBS+xM8EKQzmmgFoZYUw,,,N,0,0,,,2014-04-05 12:27,2014-04-05 13:21,admin,admin,
367,140110,1749,36320,642,0,N,N,N,CP_Drtn,TT_Task,DT_FixedDUR2,TK_NotStart,BL2-MEP-FF-B1-2000,Fire Fighting Pipes and Fittings Installation,,992,0,168,0,1008,1008,168,307.83721,0,307.83721,,,,2015-06-15 08:00,2015-07-05 16:00,,2015-01-24 08:00,2015-02-16 16:00,2015-01-24 08:00,2015-02-16 16:00,2015-01-24 08:00,2015-02-16 16:00,2015-06-15 08:00,2015-07-05 16:00,,PT_Normal,,,,,hg9tqsJxDkiO73MpwQYH5Q,9cLXLXOytk2CldXBJtDo+w,,,N,0,0,,,2014-04-05 12:27,2014-04-05 13:21,admin,admin,
368,140111,1749,36320,642,0,N,N,N,CP_Drtn,TT_Task,DT_FixedDUR2,TK_NotStart,BL2-MEP-FF-B1-2010,Fire Fighting Pipes Pressure Test,,992,240,48,0,96,96,48,41.857235,0,41.857235,,,,2015-07-06 08:00,2015-07-11 16:00,,2015-02-17 08:00,2015-02-23 16:00,2015-02-17 08:00,2015-02-23 16:00,2015-02-17 08:00,2015-02-23 16:00,2015-07-06 08:00,2015-07-11 16:00,,PT_Normal,,,,,LZ9dHqMbRUOkbMay/9mBKQ,iMx3ens0FUmVgJVOBWsgVw,,,N,0,0,,,2014-04-05 12:27,2014-04-05 13:21,admin,admin,
369,140112,1749,36333,642,0,N,N,N,CP_Drtn,TT_Task,DT_FixedDUR2,TK_NotStart,BL2-MEP-FF-B1-1000,Supports  and Hungers installation,,1296,304,96,0,288,288,96,47.857235,0,47.857235,,,,2015-06-03 08:00,2015-06-14 16:00,,2014-11-24 08:00,2014-12-07 16:00,2014-11-24 08:00,2014-12-07 16:00,2014-11-24 08:00,2014-12-07 16:00,2015-06-03 08:00,2015-06-14 16:00,,PT_Normal,,,,,zqrCTmRlVEWX5FBdjUxKmA,PoEZXf78BUG6tPINoCx/9g,,,N,0,0,,,2014-04-05 12:27,2014-04-05 13:21,admin,admin,
370,140113,1749,36137,642,0,N,N,N,CP_Drtn,TT_Task,DT_FixedDUR2,TK_NotStart,BL2-MEP-EL-B1-2070,"SMDB's , MDB's  Installation",,848,0,96,0,336,336,96,4208.598932,0,4208.598932,,,,2015-06-30 08:00,2015-07-11 16:00,,2015-03-03 08:00,2015-03-16 16:00,2015-03-03 08:00,2015-03-16 16:00,2015-03-03 08:00,2015-03-16 16:00,2015-06-30 08:00,2015-07-11 16:00,,PT_Normal,,,,,DS5QwklwVUKT0sCMl+btlQ,o8FtUwbLfUeCSwBJQ/KhhA,,,N,0,0,,,2014-04-05 12:27,2014-04-05 13:21,admin,admin,
371,140114,1749,36137,642,0,N,N,N,CP_Drtn,TT_Task,DT_FixedDUR2,TK_NotStart,BL2-MEP-EL-B1-2040,BMS System Wiring,,1048,200,64,0,186,186,64,15191.435697,0,15191.435697,,,,2015-06-22 08:00,2015-06-29 16:00,,2015-01-24 08:00,2015-02-01 16:00,2015-01-24 08:00,2015-02-01 16:00,2015-01-24 08:00,2015-02-01 16:00,2015-06-22 08:00,2015-06-29 16:00,,PT_Normal,,,,,7cZ1cNk3xUWS+VcZOD+sKQ,GMz/9GQK2k+vFhaZrG/VGQ,,,N,0,0,,,2014-04-05 12:27,2014-04-05 13:21,admin,admin,
372,140115,1749,36137,642,0,N,N,N,CP_Drtn,TT_Task,DT_FixedDUR2,TK_NotStart,BL2-MEP-EL-B1-2020,Lighting  Wiring,,1112,80,96,0,241.713,241.713,96,3578.08423,0,3578.08423,,,,2015-06-30 08:00,2015-07-11 16:00,,2015-01-24 08:00,2015-02-05 16:00,2015-01-24 08:00,2015-02-05 16:00,2015-01-24 08:00,2015-02-05 16:00,2015-06-30 08:00,2015-07-11 16:00,,PT_Normal,,,,,2yEwcLOzuE+0h1DgpV3kEQ,e5ql7Vmss06m+k3TZHPa+w,,,N,0,0,,,2014-04-05 12:27,2014-04-05 13:21,admin,admin,
373,140116,1749,36137,642,0,N,N,N,CP_Drtn,TT_Task,DT_FixedDUR2,TK_NotStart,BL2-MEP-EL-B1-2030,Power Points Wiring,,1112,80,96,0,192,192,96,2906.213289,0,2906.213289,,,,2015-06-30 08:00,2015-07-11 16:00,,2015-01-24 08:00,2015-02-05 16:00,2015-01-24 08:00,2015-02-05 16:00,2015-01-24 08:00,2015-02-05 16:00,2015-06-30 08:00,2015-07-11 16:00,,PT_Normal,,,,,PYxjym01gkeWSWjBvHYIVQ,2luxvtdGMUe20JmBUWxwFg,,,N,0,0,,,2014-04-05 12:27,2014-04-05 13:21,admin,admin,
374,140117,1749,36137,642,0,N,N,N,CP_Drtn,TT_Task,DT_FixedDUR2,TK_NotStart,BL2-MEP-EL-B1-2000,Cable Tray and Trunking Installation,,1040,8,168,0,336,336,168,9085.448617,0,9085.448617,,,,2015-06-21 08:00,2015-07-11 16:00,,2015-01-24 08:00,2015-02-16 16:00,2015-01-24 08:00,2015-02-16 16:00,2015-01-24 08:00,2015-02-16 16:00,2015-06-21 08:00,2015-07-11 16:00,,PT_Normal,,,,,+x0xZRq0H0a1IfucvC2uvA,gH7dm2vA5kaYvC/UHYu/tw,,,N,0,0,,,2014-04-05 12:27,2014-04-05 13:21,admin,admin,
375,140118,1749,36137,642,0,N,N,N,CP_Drtn,TT_Task,DT_FixedDUR2,TK_NotStart,BL2-MEP-EL-B1-2050,Emergency Light Wiring,,1144,112,64,0,128,128,64,1210.028798,0,1210.028798,,,,2015-07-04 08:00,2015-07-11 16:00,,2015-01-24 08:00,2015-02-01 16:00,2015-01-24 08:00,2015-02-01 16:00,2015-01-24 08:00,2015-02-01 16:00,2015-07-04 08:00,2015-07-11 16:00,,PT_Normal,,,,,8EIEkThwg02iMS6xR8majA,o0GZ/bfxGEyVMM9EISy8Ag,,,N,0,0,,,2014-04-05 12:27,2014-04-05 13:21,admin,admin,
376,140119,1749,36137,642,0,N,N,N,CP_Drtn,TT_Task,DT_FixedDUR2,TK_NotStart,BL2-MEP-EL-B1-2010,Fire Alarm System Wiring,,1112,80,96,0,192,192,96,7123.009694,0,7123.009694,,,,2015-06-30 08:00,2015-07-11 16:00,,2015-01-24 08:00,2015-02-05 16:00,2015-01-24 08:00,2015-02-05 16:00,2015-01-24 08:00,2015-02-05 16:00,2015-06-30 08:00,2015-07-11 16:00,,PT_Normal,,,,,QtvbvRixCkClDrCVurhWiw,i7Yh/AmBIUKxlx8lL7f6vQ,,,N,0,0,,,2014-04-05 12:27,2014-04-05 13:21,admin,admin,
377,140120,1749,36137,642,0,N,N,N,CP_Drtn,TT_Task,DT_FixedDUR2,TK_NotStart,BL2-MEP-EL-B1-2060,DB's Installation and Termination,4455,992,0,96,0,288,288,96,4982.925025,0,4982.925025,,,,2015-06-30 08:00,2015-07-11 16:00,,2015-02-10 08:00,2015-02-23 16:00,2015-02-10 08:00,2015-02-23 16:00,2015-02-10 08:00,2015-02-23 16:00,2015-06-30 08:00,2015-07-11 16:00,,PT_Normal,,,,,9+93nAK7vU+h+9ubeaBaNQ,izrGyPeZz022E7HsLNjiMg,,,N,0,0,,,2014-04-05 12:27,2014-04-05 13:21,admin,admin,
378,140121,1749,36138,642,0,N,N,N,CP_Drtn,TT_Task,DT_FixedDUR2,TK_NotStart,BL2-MEP-EL-B1-3020,Lights Fitting Fixing,,1232,120,112,0,244,244,112,7336.659378,0,7336.659378,,,,2015-09-16 08:00,2015-09-29 16:00,,2015-04-07 08:00,2015-04-22 16:00,2015-04-07 08:00,2015-04-22 16:00,2015-04-07 08:00,2015-04-22 16:00,2015-09-16 08:00,2015-09-29 16:00,,PT_Normal,,,,,Y8A8lu9EPkq9H6UgiBWqNA,H5ZPGIgMlU292ZxbPVYEXQ,,,N,0,0,,,2014-04-05 12:27,2014-04-05 13:21,admin,admin,
379,140122,1749,36138,642,0,N,N,N,CP_Drtn,TT_Task,DT_FixedDUR2,TK_NotStart,BL2-MEP-EL-B1-3050,Sockets and Switches Fixing,,1776,184,64,0,128,128,64,1174.957134,0,1174.957134,,,,2015-11-21 08:00,2015-11-28 16:00,,2015-04-05 08:00,2015-04-13 16:00,2015-04-05 08:00,2015-04-13 16:00,2015-04-05 08:00,2015-04-13 16:00,2015-11-21 08:00,2015-11-28 16:00,,PT_Normal,,,,,VCTTlMyCME6+rW7CLjN4aw,NYip4g6x4ESWCAGVZh66oA,,,N,0,0,,,2014-04-05 12:27,2014-04-05 13:21,admin,admin,
380,140123,1749,36138,642,0,N,N,N,CP_Drtn,TT_Task,DT_FixedDUR2,TK_NotStart,BL2-MEP-EL-B1-3030,Emergency Light Fixing,,1816,168,64,0,128,128,64,5722.024623,0,5722.024623,,,,2015-11-28 08:00,2015-12-05 16:00,,2015-04-07 08:00,2015-04-15 16:00,2015-04-07 08:00,2015-04-15 16:00,2015-04-07 08:00,2015-04-15 16:00,2015-11-28 08:00,2015-12-05 16:00,,PT_Normal,,,,,ua3lywLZRE6Qde2S0NczUA,sMXGBfYriEyA4v+/kI0MCQ,,,N,0,0,,,2014-04-05 12:27,2014-04-05 13:21,admin,admin,
381,140124,1749,36138,642,0,N,N,N,CP_Drtn,TT_Task,DT_FixedDUR2,TK_NotStart,BL2-MEP-EL-B1-3000,CO2 System Installation,,1040,584,48,0,179.65,179.65,48,21033.761938,0,21033.761938,,,,2016-01-25 08:00,2016-01-30 16:00,,2015-09-17 08:00,2015-09-22 16:00,2015-09-17 08:00,2015-09-22 16:00,2015-09-17 08:00,2015-09-22 16:00,2016-01-25 08:00,2016-01-30 16:00,,PT_Normal,,,,,RFb6rM2ESEuFCSjSs8yrBg,vSSyJT1McUmIPZy3ojTSnw,,,N,0,0,,,2014-04-05 12:27,2014-04-05 13:21,admin,admin,
382,140125,1749,36138,642,0,N,N,N,CP_Drtn,TT_Task,DT_FixedDUR2,TK_NotStart,BL2-MEP-EL-B1-3010,Fire Alarm System Detector Installation,,1408,136,96,0,192,192,96,4046.378277,0,4046.378277,,,,2015-10-08 08:00,2015-10-19 16:00,,2015-04-07 08:00,2015-04-20 16:00,2015-04-07 08:00,2015-04-20 16:00,2015-04-07 08:00,2015-04-20 16:00,2015-10-08 08:00,2015-10-19 16:00,,PT_Normal,,,,,6px6/1bdv0+KolJISK/Brw,muTksFc9oEasjLP1MXn4Ww,,,N,0,0,,,2014-04-05 12:27,2014-04-05 13:21,admin,admin,
383,140126,1749,36138,642,0,N,N,N,CP_Drtn,TT_Task,DT_FixedDUR2,TK_NotStart,BL2-MEP-EL-B1-3060,"SMDB's  , MDB's Termination and Final Connection",,1824,136,96,0,384,384,96,20737.637079,0,20737.637079,,,,2015-11-29 08:00,2015-12-10 16:00,,2015-04-07 08:00,2015-04-20 16:00,2015-04-07 08:00,2015-04-20 16:00,2015-04-07 08:00,2015-04-20 16:00,2015-11-29 08:00,2015-12-10 16:00,,PT_Normal,,,,,TuqjsRwceESPAgbgGmyJrQ,71t8d8sItU+TipHBE3ihzQ,,,N,0,0,,,2014-04-05 12:27,2014-04-05 13:21,admin,admin,
384,140127,1749,36137,642,0,N,N,N,CP_Drtn,TT_Task,DT_FixedDUR2,TK_NotStart,BL2-MEP-EL-B1-3040,Power Cable Puling,,1408,64,112,0,168,168,112,13646.333768,0,13646.333768,,,,2015-09-02 08:00,2015-09-15 16:00,,2015-02-24 08:00,2015-03-11 16:00,2015-02-24 08:00,2015-03-11 16:00,2015-02-24 08:00,2015-03-11 16:00,2015-09-02 08:00,2015-09-15 16:00,,PT_Normal,,,,,dueI/yVutE6hHUDnF7GSVA,oAhdb+y62kSTdl1EJNXdQQ,,,N,0,0,,,2014-04-05 12:27,2014-04-05 13:21,admin,admin,
385,140128,1749,36071,642,0,N,N,N,CP_Drtn,TT_Task,DT_FixedDUR2,TK_NotStart,BL2-MEP-EL-B1-1000,PVC Back Boxes and Conduits  Fixing in Wall,,472,0,176,0,384,384,176,3329.67233,0,3329.67233,,,,2015-02-14 08:00,2015-03-10 16:00,,2014-12-04 08:00,2014-12-29 16:00,2014-12-04 08:00,2014-12-29 16:00,2014-12-04 08:00,2014-12-29 16:00,2015-02-14 08:00,2015-03-10 16:00,,PT_Normal,,,,,BsyDGkjlIEaaDWD6A06ykg,SKoOIaWPY0igDJEheCPH/Q,,,N,0,0,,,2014-04-05 12:27,2014-04-05 13:21,admin,admin,
386,140129,1749,36071,642,0,N,N,N,CP_Drtn,TT_Task,DT_FixedDUR2,TK_NotStart,BL2-MEP-EL-B1-1010,DB's Inclosure Fixing,4455,624,128,48,0,96,96,48,2136.399392,0,2136.399392,,,,2015-03-08 08:00,2015-03-14 16:00,,2014-12-04 08:00,2014-12-10 16:00,2014-12-04 08:00,2014-12-10 16:00,2014-12-04 08:00,2014-12-10 16:00,2015-03-08 08:00,2015-03-14 16:00,,PT_Normal,,,,,WacnLhpttkyKE0+juHXolA,Z6OPpGA8w0GDCELulBxDJw,,,N,0,0,,,2014-04-05 12:27,2014-04-05 13:21,admin,admin,
387,140130,1749,36263,642,0,N,N,N,CP_Drtn,TT_Task,DT_FixedDUR2,TK_NotStart,BL2-MEP-EL-8F-1000,PVC Back Boxes and Conduits  Fixing in Wall,,208,8,96,0,384,384,96,3319.67233,0,3319.67233,,,,2015-08-11 08:00,2015-08-22 16:00,,2015-07-16 08:00,2015-07-27 16:00,2015-07-16 08:00,2015-07-27 16:00,2015-07-16 08:00,2015-07-27 16:00,2015-08-11 08:00,2015-08-22 16:00,,PT_Normal,,,,,8aKsYNNOwU+vvwO+sfGhiA,zyurPb11WEyGPEWRsQIpMA,,,N,0,0,,,2014-04-05 12:27,2014-04-05 13:21,admin,admin,
388,140131,1749,36263,642,0,N,N,N,CP_Drtn,TT_Task,DT_FixedDUR2,TK_NotStart,BL2-MEP-EL-8F-1010,DB's Inclosure Fixing,4455,320,48,48,0,96,96,48,2136.399392,0,2136.399392,,,,2015-09-03 08:00,2015-09-08 16:00,,2015-07-25 08:00,2015-07-30 16:00,2015-07-25 08:00,2015-07-30 16:00,2015-07-25 08:00,2015-07-30 16:00,2015-09-03 08:00,2015-09-08 16:00,,PT_Normal,,,,,L67ICq+T7U+GuRLfsvyQgQ,+n5j4gINuEy6LGHosMDtmA,,,N,0,0,,,2014-04-05 12:27,2014-04-05 13:21,admin,admin,
389,140132,1749,36237,642,0,N,N,N,CP_Drtn,TT_Task,DT_FixedDUR2,TK_NotStart,BL2-MEP-EL-8F-2060,SMDB's  Installation,,1080,0,48,0,45,45,48,4202.598932,0,4202.598932,,,,2016-01-22 08:00,2016-01-27 16:00,,2015-09-09 08:00,2015-09-14 16:00,2015-09-09 08:00,2015-09-14 16:00,2015-09-09 08:00,2015-09-14 16:00,2016-01-22 08:00,2016-01-27 16:00,,PT_Normal,,,,,mbRFH0VOck+5p6Vz42Gvdw,BGuPb+a6Y0y2vFPlxvCazQ,,,N,0,0,,,2014-04-05 12:27,2014-04-05 13:21,admin,admin,
390,140133,1749,36237,642,0,N,N,N,CP_Drtn,TT_Task,DT_FixedDUR2,TK_NotStart,BL2-MEP-EL-8F-2020,Lighting  Wiring,,632,0,96,0,241.713,241.713,96,3578.08423,0,3578.08423,,,,2015-11-12 08:00,2015-11-23 16:00,,2015-08-25 08:00,2015-09-05 16:00,2015-08-25 08:00,2015-09-05 16:00,2015-08-25 08:00,2015-09-05 16:00,2015-11-12 08:00,2015-11-23 16:00,,PT_Normal,,,,,MxkQowY73ESemQNF28Z4aw,ImX3E+I9jEOoF3/gyHtx7w,,,N,0,0,,,2014-04-05 12:27,2014-04-05 13:21,admin,admin,
391,140134,1749,36237,642,0,N,N,N,CP_Drtn,TT_Task,DT_FixedDUR2,TK_NotStart,BL2-MEP-EL-8F-2030,Power Points Wiring,,632,0,96,0,192,192,96,2906.213289,0,2906.213289,,,,2015-11-12 08:00,2015-11-23 16:00,,2015-08-25 08:00,2015-09-05 16:00,2015-08-25 08:00,2015-09-05 16:00,2015-08-25 08:00,2015-09-05 16:00,2015-11-12 08:00,2015-11-23 16:00,,PT_Normal,,,,,bsuSzFFm0UG365CsHae1jw,pm6nYkejpkuI3HrJEgnQMg,,,N,0,0,,,2014-04-05 12:27,2014-04-05 13:21,admin,admin,
392,140135,1749,36237,642,0,N,N,N,CP_Drtn,TT_Task,DT_FixedDUR2,TK_NotStart,BL2-MEP-EL-8F-2050,Cable Tray and Trunking Installation,,616,104,112,0,336,336,112,9078.448617,0,9078.448617,,,,2015-11-10 08:00,2015-11-23 16:00,,2015-08-25 08:00,2015-09-07 16:00,2015-08-25 08:00,2015-09-07 16:00,2015-08-25 08:00,2015-09-07 16:00,2015-11-10 08:00,2015-11-23 16:00,,PT_Normal,,,,,6IoxDpMbD0il7astY61Xwg,89gKHDGlsUKZsUZMul+LZA,,,N,0,0,,,2014-04-05 12:27,2014-04-05 13:21,admin,admin,
393,140136,1749,36237,642,0,N,N,N,CP_Drtn,TT_Task,DT_FixedDUR2,TK_NotStart,BL2-MEP-EL-8F-2000,Emergency Light Wiring,,664,392,64,0,128,128,64,1210.028798,0,1210.028798,,,,2015-11-16 08:00,2015-11-23 16:00,,2015-08-25 08:00,2015-09-01 16:00,2015-08-25 08:00,2015-09-01 16:00,2015-08-25 08:00,2015-09-01 16:00,2015-11-16 08:00,2015-11-23 16:00,,PT_Normal,,,,,NRytJh/AJEmJCsccEwDg/Q,fO1kOzIVokC1JtVoc/pWxA,,,N,0,0,,,2014-04-05 12:27,2014-04-05 13:21,admin,admin,
394,140137,1749,36237,642,0,N,N,N,CP_Drtn,TT_Task,DT_FixedDUR2,TK_NotStart,BL2-MEP-EL-8F-2040,Fire Alarm System Wiring,,632,0,96,0,192,192,96,7123.009694,0,7123.009694,,,,2015-11-12 08:00,2015-11-23 16:00,,2015-08-25 08:00,2015-09-05 16:00,2015-08-25 08:00,2015-09-05 16:00,2015-08-25 08:00,2015-09-05 16:00,2015-11-12 08:00,2015-11-23 16:00,,PT_Normal,,,,,ESVvOFhBj0Sf6kYoMbijuA,3YKbLvr/qUK/2ertwGaORw,,,N,0,0,,,2014-04-05 12:27,2014-04-05 13:21,admin,admin,
395,140138,1749,36237,642,0,N,N,N,CP_Drtn,TT_Task,DT_FixedDUR2,TK_NotStart,BL2-MEP-EL-8F-2070,DB's Installation and Termination,4455,512,240,96,0,288,288,96,4982.925025,0,4982.925025,,,,2015-11-12 08:00,2015-11-23 16:00,,2015-09-09 08:00,2015-09-20 16:00,2015-09-09 08:00,2015-09-20 16:00,2015-09-09 08:00,2015-09-20 16:00,2015-11-12 08:00,2015-11-23 16:00,,PT_Normal,,,,,H6fpCYnJz0mcua3tyvxFAA,mnsDtTVHUEi7+Pwvo/cuMA,,,N,0,0,,,2014-04-05 12:27,2014-04-05 13:21,admin,admin,
396,140139,1749,36237,642,0,N,N,N,CP_Drtn,TT_Task,DT_FixedDUR2,TK_NotStart,BL2-MEP-EL-8F-2010,Low Current  System Wiring,4455,1096,392,112,0,244,244,112,38231.783306,0,38231.783306,,,,2016-01-09 08:00,2016-01-22 16:00,,2015-08-25 08:00,2015-09-07 16:00,2015-08-25 08:00,2015-09-07 16:00,2015-08-25 08:00,2015-09-07 16:00,2016-01-09 08:00,2016-01-22 16:00,,PT_Normal,,,,,sIOog8PkR0ifgvfbx201vg,s3iIILPsVEK0NFgoJVYhoA,,,N,0,0,,,2014-04-05 12:27,2014-04-05 13:21,admin,admin,
397,140140,1749,36297,642,0,N,N,N,CP_Drtn,TT_Task,DT_FixedDUR2,TK_NotStart,BL2-MEP-EL-8F-3020,Lights Fitting Fixing,,680,0,112,0,244,244,112,7336.659378,0,7336.659378,,,,2016-01-20 08:00,2016-02-02 16:00,,2015-10-27 08:00,2015-11-09 16:00,2015-10-27 08:00,2015-11-09 16:00,2015-10-27 08:00,2015-11-09 16:00,2016-01-20 08:00,2016-02-02 16:00,,PT_Normal,,,,,+fLnp739MkKsGDqruwpr1Q,XWeb7N3l10Kabn5L+6RTNw,,,N,0,0,,,2014-04-05 12:27,2014-04-05 13:21,admin,admin,
398,140141,1749,36297,642,0,N,N,N,CP_Drtn,TT_Task,DT_FixedDUR2,TK_NotStart,BL2-MEP-EL-8F-3070,Sockets and Switches Fixing,,776,0,64,0,128,128,64,1174.957134,0,1174.957134,,,,2016-02-01 08:00,2016-02-08 16:00,,2015-10-27 08:00,2015-11-03 16:00,2015-10-27 08:00,2015-11-03 16:00,2015-10-27 08:00,2015-11-03 16:00,2016-02-01 08:00,2016-02-08 16:00,,PT_Normal,,,,,GIjowt14n0SBl+h+O49I/w,xUV5CAR8N0K+V0AMlttkCg,,,N,0,0,,,2014-04-05 12:27,2014-04-05 13:21,admin,admin,
399,140142,1749,36297,642,0,N,N,N,CP_Drtn,TT_Task,DT_FixedDUR2,TK_NotStart,BL2-MEP-EL-8F-3030,Emergency Light Fixing,,832,344,64,0,128,128,64,5722.024623,0,5722.024623,,,,2016-02-08 08:00,2016-02-15 16:00,,2015-10-27 08:00,2015-11-03 16:00,2015-10-27 08:00,2015-11-03 16:00,2015-10-27 08:00,2015-11-03 16:00,2016-02-08 08:00,2016-02-15 16:00,,PT_Normal,,,,,xnMnS/aJNk2/WCgTZ4E+Cg,hnaxyt+UCkqj3zuqDCIZrg,,,N,0,0,,,2014-04-05 12:27,2014-04-05 13:21,admin,admin,
400,140143,1749,36297,642,0,N,N,N,CP_Drtn,TT_Task,DT_FixedDUR2,TK_NotStart,BL2-MEP-EL-8F-3040,Fire Alarm System Detector Installation,,712,0,96,0,192,192,96,4046.378277,0,4046.378277,,,,2016-01-24 08:00,2016-02-04 16:00,,2015-10-27 08:00,2015-11-07 16:00,2015-10-27 08:00,2015-11-07 16:00,2015-10-27 08:00,2015-11-07 16:00,2016-01-24 08:00,2016-02-04 16:00,,PT_Normal,,,,,oonTtTok90GJLUq4LBiocw,gKEiWA3h8USimY0qcbrzHA,,,N,0,0,,,2014-04-05 12:27,2014-04-05 13:21,admin,admin,
401,140144,1749,36297,642,0,N,N,N,CP_Drtn,TT_Task,DT_FixedDUR2,TK_NotStart,BL2-MEP-EL-8F-3010,SMDB's  Termination and Final Connection,,744,0,48,0,192,192,48,2791.825001,0,2791.825001,,,,2016-01-28 08:00,2016-02-02 16:00,,2015-10-27 08:00,2015-11-01 16:00,2015-10-27 08:00,2015-11-01 16:00,2015-10-27 08:00,2015-11-01 16:00,2016-01-28 08:00,2016-02-02 16:00,,PT_Normal,,,,,SGCQoJOdTUC5nJY0PAI2nQ,7uJBF749+UGG/p4645LQzQ,,,N,0,0,,,2014-04-05 12:27,2014-04-05 13:21,admin,admin,
402,140145,1749,36237,642,0,N,N,N,CP_Drtn,TT_Task,DT_FixedDUR2,TK_NotStart,BL2-MEP-EL-8F-3000,Power Cable Puling,,856,24,112,0,168,168,112,6375.759893,0,6375.759893,,,,2016-01-06 08:00,2016-01-19 16:00,,2015-09-21 08:00,2015-10-04 16:00,2015-09-21 08:00,2015-10-04 16:00,2015-09-21 08:00,2015-10-04 16:00,2016-01-06 08:00,2016-01-19 16:00,,PT_Normal,,,,,F76uXfGIa0icPIjltxSH8w,az37LEVN+ESnHJ/FKUudLg,,,N,0,0,,,2014-04-05 12:27,2014-04-05 13:21,admin,admin,
403,140146,1749,36297,642,0,N,N,N,CP_Drtn,TT_Task,DT_FixedDUR2,TK_NotStart,BL2-MEP-EL-8F-3050,Despature for Low Current  System Installation,4455,704,0,112,0,336,336,112,72752.164276,0,72752.164276,,,,2016-01-23 08:00,2016-02-05 16:00,,2015-10-27 08:00,2015-11-09 16:00,2015-10-27 08:00,2015-11-09 16:00,2015-10-27 08:00,2015-11-09 16:00,2016-01-23 08:00,2016-02-05 16:00,,PT_Normal,,,,,oWV4AGZpfUSdwDXbtcLjMg,0KSnyxIv3kWZhTnTeoFaVw,,,N,0,0,,,2014-04-05 12:27,2014-04-05 13:21,admin,admin,
404,140147,1749,36297,642,0,N,N,N,CP_Drtn,TT_Task,DT_FixedDUR2,TK_NotStart,BL2-MEP-EL-8F-3060,Low Current  System Outlet installation and Connection,4455,704,216,80,0,80,80,80,3870.787498,0,3870.787498,,,,2016-02-06 08:00,2016-02-15 16:00,,2015-11-10 08:00,2015-11-19 16:00,2015-11-10 08:00,2015-11-19 16:00,2015-11-10 08:00,2015-11-19 16:00,2016-02-06 08:00,2016-02-15 16:00,,PT_Normal,,,,,TX6Rj6KUHE6TlK1ZfZXIyA,mdOtIPiAOkKcj9v/CGD1iA,,,N,0,0,,,2014-04-05 12:27,2014-04-05 13:21,admin,admin,
405,140148,1749,36559,642,0,N,N,N,CP_Drtn,TT_Task,DT_FixedDUR2,TK_NotStart,BL2-MEP-AC-8F-1000,Supports and Hungers Fixing,,592,152,96,0,192,192,96,338.467259,0,338.467259,,,,2015-10-07 08:00,2015-10-18 16:00,,2015-07-25 08:00,2015-08-05 16:00,2015-07-25 08:00,2015-08-05 16:00,2015-07-25 08:00,2015-08-05 16:00,2015-10-07 08:00,2015-10-18 16:00,,PT_Normal,,,,,a7/vsrLrZk29N2uXJQPuXQ,wvS+es7OoUOozkqzof0OrA,,,N,0,0,,,2014-04-05 12:27,2014-04-05 13:21,admin,admin,
406,140149,1749,36560,642,0,N,N,N,CP_Drtn,TT_Task,DT_FixedDUR2,TK_NotStart,BL2-MEP-AC-8F-2010,Duct Installation and Insulation,4454,360,0,168,0,263,263,168,4350.939473,0,4350.939473,,,,2015-10-20 08:00,2015-11-09 16:00,,2015-09-05 08:00,2015-09-25 16:00,2015-09-05 08:00,2015-09-25 16:00,2015-09-05 08:00,2015-09-25 16:00,2015-10-20 08:00,2015-11-09 16:00,,PT_Normal,,,,,u4ZgGabVGUOAiQMSoCk4ng,/TvWaAqjGEuqrK9uSwLDZg,,,N,0,0,,,2014-04-05 12:27,2014-04-05 13:21,admin,admin,
407,140150,1749,36560,642,0,N,N,N,CP_Drtn,TT_Task,DT_FixedDUR2,TK_NotStart,BL2-MEP-AC-8F-2030,Duct Accessories Installation,4457,360,88,112,0,448,448,112,666.965527,0,666.965527,,,,2015-11-10 08:00,2015-11-23 16:00,,2015-09-26 08:00,2015-10-09 16:00,2015-09-26 08:00,2015-10-09 16:00,2015-09-26 08:00,2015-10-09 16:00,2015-11-10 08:00,2015-11-23 16:00,,PT_Normal,,,,,yFHP4fIt80SIYeiqeJmhKw,K7YsgSG2OUWtRp9lSh9Zmg,,,N,0,0,,,2014-04-05 12:27,2014-04-05 13:21,admin,admin,
408,140151,1749,36560,642,0,N,N,N,CP_Drtn,TT_Task,DT_FixedDUR2,TK_NotStart,BL2-MEP-AC-8F-2000,FCU's Installation,4457,592,240,64,0,96,96,64,6000.055155,0,6000.055155,,,,2015-11-07 08:00,2015-11-14 16:00,,2015-08-25 08:00,2015-09-01 16:00,2015-08-25 08:00,2015-09-01 16:00,2015-08-25 08:00,2015-09-01 16:00,2015-11-07 08:00,2015-11-14 16:00,,PT_Normal,,,,,8R0r43oAdUGJ12CdpEQMTw,FRu5Rhm6y0OZJA0mLezW5w,,,N,0,0,,,2014-04-05 12:27,2014-04-05 13:21,admin,admin,
409,140152,1749,36560,642,0,N,N,N,CP_Drtn,TT_Task,DT_FixedDUR2,TK_NotStart,BL2-MEP-AC-8F-2020,Chilled Water Pipes and Fittings Installation,4457,352,0,168,0,420,420,168,5251.194852,0,5251.194852,,,,2015-10-19 08:00,2015-11-08 16:00,,2015-09-05 08:00,2015-09-25 16:00,2015-09-05 08:00,2015-09-25 16:00,2015-09-05 08:00,2015-09-25 16:00,2015-10-19 08:00,2015-11-08 16:00,,PT_Normal,,,,,N57ZvCnBeUCfNCDGpeDPSg,+GBWB2wtWU+NMDkHG+kEMg,,,N,0,0,,,2014-04-05 12:27,2014-04-05 13:21,admin,admin,
410,140153,1749,36560,642,0,N,N,N,CP_Drtn,TT_Task,DT_FixedDUR2,TK_NotStart,BL2-MEP-AC-8F-2040,Chilled Water Pipes Pressure Test,4457,352,0,48,0,48,48,48,587.116683,0,587.116683,,,,2015-11-09 08:00,2015-11-14 16:00,,2015-09-26 08:00,2015-10-01 16:00,2015-09-26 08:00,2015-10-01 16:00,2015-09-26 08:00,2015-10-01 16:00,2015-11-09 08:00,2015-11-14 16:00,,PT_Normal,,,,,X5t0XRRI4Ei2hHDrJ8gynw,r73s2Dc6NkGIBhbJbnu2rg,,,N,0,0,,,2014-04-05 12:27,2014-04-05 13:21,admin,admin,
411,140154,1749,36560,642,0,N,N,N,CP_Drtn,TT_Task,DT_FixedDUR2,TK_NotStart,BL2-MEP-AC-8F-2050,Chilled Water Pipes Insulation,4457,832,440,96,0,192,192,96,1670.208495,0,1670.208495,,,,2016-01-14 08:00,2016-01-25 16:00,,2015-10-02 08:00,2015-10-13 16:00,2015-10-02 08:00,2015-10-13 16:00,2015-10-02 08:00,2015-10-13 16:00,2016-01-14 08:00,2016-01-25 16:00,,PT_Normal,,,,,UlBhWa5d6UuyTrl44KNCpw,AmfEGuHwmUOMUFPhgjn7Bw,,,N,0,0,,,2014-04-05 12:27,2014-04-05 13:21,admin,admin,
412,140155,1749,36560,642,0,N,N,N,CP_Drtn,TT_Task,DT_FixedDUR2,TK_NotStart,BL2-MEP-AC-8F-2060,Valve Package Installation,4457,352,0,48,0,48,48,48,2386.490429,0,2386.490429,,,,2015-11-15 08:00,2015-11-20 16:00,,2015-10-02 08:00,2015-10-07 16:00,2015-10-02 08:00,2015-10-07 16:00,2015-10-02 08:00,2015-10-07 16:00,2015-11-15 08:00,2015-11-20 16:00,,PT_Normal,,,,,xL8aWO8HUUW6ut2lkOX6Fg,Kr/2b/3F+kWn1dV4PNjjRg,,,N,0,0,,,2014-04-05 12:27,2014-04-05 13:21,admin,admin,
413,140156,1749,36560,642,0,N,N,N,CP_Drtn,TT_Task,DT_FixedDUR2,TK_NotStart,BL2-MEP-AC-8F-2070,FCU's Drain Pipes Installation,4457,352,80,24,0,24,24,24,519.927167,0,519.927167,,,,2015-11-21 08:00,2015-11-23 16:00,,2015-10-08 08:00,2015-10-10 16:00,2015-10-08 08:00,2015-10-10 16:00,2015-10-08 08:00,2015-10-10 16:00,2015-11-21 08:00,2015-11-23 16:00,,PT_Normal,,,,,qWjWV7ONpkWAbycSwxsxPQ,a4eNcbydzkuHdkmSylhE3w,,,N,0,0,,,2014-04-05 12:27,2014-04-05 13:21,admin,admin,
414,140157,1749,36561,642,0,N,N,N,CP_Drtn,TT_Task,DT_FixedDUR2,TK_NotStart,BL2-MEP-AC-8F-3000,Grills and Diffusers Fixing,,776,312,96,0,384,384,96,11550.608192,0,11550.608192,,,,2016-02-01 08:00,2016-02-12 16:00,,2015-10-27 08:00,2015-11-07 16:00,2015-10-27 08:00,2015-11-07 16:00,2015-10-27 08:00,2015-11-07 16:00,2016-02-01 08:00,2016-02-12 16:00,,PT_Normal,,,,,LpmBFu1pyUyTJc92WoN+Xw,wta3uxOwsku/eZiqubgf8w,,,N,0,0,,,2014-04-05 12:27,2014-04-05 13:21,admin,admin,
415,140158,1749,36563,642,0,N,N,N,CP_Drtn,TT_Task,DT_FixedDUR2,TK_NotStart,BL2-MEP-PL-8F-1000,Low Level Water Supply Pipes Installation,,272,0,96,0,42,42,96,725.216846,0,725.216846,,,,2015-08-28 08:00,2015-09-08 16:00,,2015-07-25 08:00,2015-08-05 16:00,2015-07-25 08:00,2015-08-05 16:00,2015-07-25 08:00,2015-08-05 16:00,2015-08-28 08:00,2015-09-08 16:00,,PT_Normal,,,,,UonQlgUbYU+z9P2hXB3b1w,pZOZ6rb5EEGEeCJP+kYaxg,,,N,0,0,,,2014-04-05 12:27,2014-04-05 13:21,admin,admin,
416,140159,1749,36563,642,0,N,N,N,CP_Drtn,TT_Task,DT_FixedDUR2,TK_NotStart,BL2-MEP-PL-8F-1010,Low Level Drainage Pipes Installation,,272,0,96,0,12.67,12.67,96,2291.461713,0,2291.461713,,,,2015-08-28 08:00,2015-09-08 16:00,,2015-07-25 08:00,2015-08-05 16:00,2015-07-25 08:00,2015-08-05 16:00,2015-07-25 08:00,2015-08-05 16:00,2015-08-28 08:00,2015-09-08 16:00,,PT_Normal,,,,,4ue2Pi/gTUmyw5u9OIsYUg,nzE7F69by0OlGN+WpJPWNQ,,,N,0,0,,,2014-04-05 12:27,2014-04-05 13:21,admin,admin,
417,140160,1749,36563,642,0,N,N,N,CP_Drtn,TT_Task,DT_FixedDUR2,TK_NotStart,BL2-MEP-PL-8F-1020,Supports  installation for High level Pipes,,664,240,96,0,16.352,16.352,96,831.682549,0,831.682549,,,,2015-10-16 08:00,2015-10-27 16:00,,2015-07-25 08:00,2015-08-05 16:00,2015-07-25 08:00,2015-08-05 16:00,2015-07-25 08:00,2015-08-05 16:00,2015-10-16 08:00,2015-10-27 16:00,,PT_Normal,,,,,KIeURi0IJkyjUXysfmUJfw,08Vk4CMQjUeTb72asHkvBA,,,N,0,0,,,2014-04-05 12:27,2014-04-05 13:21,admin,admin,
418,140161,1749,36396,642,0,N,N,N,CP_Drtn,TT_Task,DT_FixedDUR2,TK_NotStart,BL2-MEP-PL-8F-2030,Floor Drain Installation,,272,0,48,0,6,6,48,554.143324,0,554.143324,,,,2015-11-12 08:00,2015-11-17 16:00,,2015-10-09 08:00,2015-10-14 16:00,2015-10-09 08:00,2015-10-14 16:00,2015-10-09 08:00,2015-10-14 16:00,2015-11-12 08:00,2015-11-17 16:00,,PT_Normal,,,,,GWQ+mEAJVEyfXXhLRIIjEg,BFJp4b3n9ka2m15J5j/cEQ,,,N,0,0,,,2014-04-05 12:27,2014-04-05 13:21,admin,admin,
419,140162,1749,36396,642,0,N,N,N,CP_Drtn,TT_Task,DT_FixedDUR2,TK_NotStart,BL2-MEP-PL-8F-2000,High Level Water Supply Pipes and Fittings Installation,,424,0,168,0,150.02,150.02,168,1329.597866,0,1329.597866,,,,2015-10-28 08:00,2015-11-17 16:00,,2015-09-05 08:00,2015-09-25 16:00,2015-09-05 08:00,2015-09-25 16:00,2015-09-05 08:00,2015-09-25 16:00,2015-10-28 08:00,2015-11-17 16:00,,PT_Normal,,,,,YFSHJsNndkG+CTOHTocItA,U8hb6XgSA06dQulfXC7iow,,,N,0,0,,,2014-04-05 12:27,2014-04-05 13:21,admin,admin,
420,140163,1749,36396,642,0,N,N,N,CP_Drtn,TT_Task,DT_FixedDUR2,TK_NotStart,BL2-MEP-PL-8F-2010,High Level Drainage Pipes Installation,,424,152,168,0,244.38,244.38,168,6583.525267,0,6583.525267,,,,2015-10-28 08:00,2015-11-17 16:00,,2015-09-05 08:00,2015-09-25 16:00,2015-09-05 08:00,2015-09-25 16:00,2015-09-05 08:00,2015-09-25 16:00,2015-10-28 08:00,2015-11-17 16:00,,PT_Normal,,,,,HRhApJUz+U23tjJqYlBYTA,JOblzFVIxkyc8dn9Fh85aw,,,N,0,0,,,2014-04-05 12:27,2014-04-05 13:21,admin,admin,
421,140164,1749,36396,642,0,N,N,N,CP_Drtn,TT_Task,DT_FixedDUR2,TK_NotStart,BL2-MEP-PL-8F-2020,Water Supply Pipes Pressure Test,4456,424,152,48,0,48,48,48,151.744312,0,151.744312,,,,2015-11-18 08:00,2015-11-23 16:00,,2015-09-26 08:00,2015-10-01 16:00,2015-09-26 08:00,2015-10-01 16:00,2015-09-26 08:00,2015-10-01 16:00,2015-11-18 08:00,2015-11-23 16:00,,PT_Normal,,,,,MWHhxa//W0y9ATl0GA4z7w,ZB9HKKk6dkOoMk63Z0yp9Q,,,N,0,0,,,2014-04-05 12:27,2014-04-05 13:21,admin,admin,
422,140165,1749,36396,642,0,N,N,N,CP_Drtn,TT_Task,DT_FixedDUR2,TK_NotStart,BL2-MEP-PL-8F-2040,Drainage Pipes Gravity Test,,272,0,48,0,48,48,48,826.240719,0,826.240719,,,,2015-11-18 08:00,2015-11-23 16:00,,2015-10-15 08:00,2015-10-20 16:00,2015-10-15 08:00,2015-10-20 16:00,2015-10-15 08:00,2015-10-20 16:00,2015-11-18 08:00,2015-11-23 16:00,,PT_Normal,,,,,L5UpvZTccEyQg1/CCm3S8g,vpCUVOSXhUO0Yf1ezoR+qA,,,N,0,0,,,2014-04-05 12:27,2014-04-05 13:21,admin,admin,
423,140166,1749,36356,642,0,N,N,N,CP_Drtn,TT_Task,DT_FixedDUR2,TK_NotStart,BL2-MEP-PL-8F-3000,Sanitary Ware Installation Including Connection,,264,0,112,0,383.862,383.862,112,4453.516455,0,4453.516455,,,,2015-12-30 08:00,2016-01-12 16:00,,2015-11-27 08:00,2015-12-10 16:00,2015-11-27 08:00,2015-12-10 16:00,2015-11-27 08:00,2015-12-10 16:00,2015-12-30 08:00,2016-01-12 16:00,,PT_Normal,,,,,QyKRrJQPXEawlQi7hyCT/w,RlLRIZGDjk+M3V/ExTb5sg,,,N,0,0,,,2014-04-05 12:27,2014-04-05 13:21,admin,admin,
424,140167,1749,36356,642,0,N,N,N,CP_Drtn,TT_Task,DT_FixedDUR2,TK_NotStart,BL2-MEP-PL-8F-3010,Sanitary Ware Accessories Installation,,264,0,48,0,36.45,36.45,48,166.215378,0,166.215378,,,,2016-01-13 08:00,2016-01-18 16:00,,2015-12-11 08:00,2015-12-16 16:00,2015-12-11 08:00,2015-12-16 16:00,2015-12-11 08:00,2015-12-16 16:00,2016-01-13 08:00,2016-01-18 16:00,,PT_Normal,,,,,R8UiErNJek+rfx7QXVys/A,pHQmiaPpski6VCq808BBcQ,,,N,0,0,,,2014-04-05 12:27,2014-04-05 13:21,admin,admin,
425,140168,1749,36358,642,0,N,N,N,CP_Drtn,TT_Task,DT_FixedDUR2,TK_NotStart,BL2-MEP-FF-8F-3000,Fire Extinguisher Installation,,488,0,16,0,8,8,16,1076.993507,0,1076.993507,,,,2016-02-11 08:00,2016-02-12 16:00,,2015-12-12 08:00,2015-12-13 16:00,2015-12-12 08:00,2015-12-13 16:00,2015-12-12 08:00,2015-12-13 16:00,2016-02-11 08:00,2016-02-12 16:00,,PT_Normal,,,,,hOQZKDRgSE6p/wIPFuG2yg,7R3u90I4iUSxrkgjTYew8A,,,N,0,0,,,2014-04-05 12:27,2014-04-05 13:21,admin,admin,
426,140169,1749,36358,642,0,N,N,N,CP_Drtn,TT_Task,DT_FixedDUR2,TK_NotStart,BL2-MEP-FF-8F-3010,Hose reel Cabinet Installation and Connection,,792,304,48,0,192,192,48,1336.852298,0,1336.852298,,,,2016-02-07 08:00,2016-02-12 16:00,,2015-10-31 08:00,2015-11-05 16:00,2015-10-31 08:00,2015-11-05 16:00,2015-10-31 08:00,2015-11-05 16:00,2016-02-07 08:00,2016-02-12 16:00,,PT_Normal,,,,,9gzQMIVBR0GV8YckkaGxqg,2HAXLoWlIk6+N48RbrjmfA,,,N,0,0,,,2014-04-05 12:27,2014-04-05 13:21,admin,admin,
427,140170,1749,36321,642,0,N,N,N,CP_Drtn,TT_Task,DT_FixedDUR2,TK_NotStart,BL2-MEP-AC-5F-3000,Grills and Diffusers Fixing,,952,80,96,0,384,384,96,11550.608192,0,11550.608192,,,,2015-12-27 08:00,2016-01-07 16:00,,2015-08-30 08:00,2015-09-10 16:00,2015-08-30 08:00,2015-09-10 16:00,2015-08-30 08:00,2015-09-10 16:00,2015-12-27 08:00,2016-01-07 16:00,,PT_Normal,,,,,hJ+a5I7zwE2kXBbGphXZlg,zS58ryrqtkmMMROMxib8gw,,,N,0,0,,,2014-04-05 12:27,2014-04-05 13:21,admin,admin,
428,140171,1749,36475,642,0,N,N,N,CP_Drtn,TT_Task,DT_FixedDUR2,TK_NotStart,BL2-MEP-AC-5F-2000,Duct Installation and Insulation,4454,360,0,168,0,263,263,168,4350.939473,0,4350.939473,,,,2015-08-18 08:00,2015-09-07 16:00,,2015-07-04 08:00,2015-07-24 16:00,2015-07-04 08:00,2015-07-24 16:00,2015-07-04 08:00,2015-07-24 16:00,2015-08-18 08:00,2015-09-07 16:00,,PT_Normal,,,,,hjHEizY0akuEAsfWdUMb2g,mlC4QHa6FEOc1ijmK8Ho+w,,,N,0,0,,,2014-04-05 12:27,2014-04-05 13:21,admin,admin,
429,140172,1749,36475,642,0,N,N,N,CP_Drtn,TT_Task,DT_FixedDUR2,TK_NotStart,BL2-MEP-AC-5F-2030,Duct Accessories Installation,4457,504,56,112,0,448,448,112,666.965527,0,666.965527,,,,2015-09-26 08:00,2015-10-09 16:00,,2015-07-25 08:00,2015-08-07 16:00,2015-07-25 08:00,2015-08-07 16:00,2015-07-25 08:00,2015-08-07 16:00,2015-09-26 08:00,2015-10-09 16:00,,PT_Normal,,,,,sbhIA2p/bUqbhC1qIGYGYg,V/53Y1LE1UahDPn2N1npTA,,,N,0,0,,,2014-04-05 12:27,2014-04-05 13:21,admin,admin,
430,140173,1749,36475,642,0,N,N,N,CP_Drtn,TT_Task,DT_FixedDUR2,TK_NotStart,BL2-MEP-AC-5F-2010,FCU's Installation,4457,696,112,64,0,96,96,64,6000.055155,0,6000.055155,,,,2015-09-23 08:00,2015-09-30 16:00,,2015-06-28 08:00,2015-07-05 16:00,2015-06-28 08:00,2015-07-05 16:00,2015-06-28 08:00,2015-07-05 16:00,2015-09-23 08:00,2015-09-30 16:00,,PT_Normal,,,,,+w4Ci5T2QkCoB3KEn4U1dA,bzooPU49B0SdigyKwk/2mg,,,N,0,0,,,2014-04-05 12:27,2014-04-05 13:21,admin,admin,
431,140174,1749,36475,642,0,N,N,N,CP_Drtn,TT_Task,DT_FixedDUR2,TK_NotStart,BL2-MEP-AC-5F-2020,Chilled Water Pipes and Fittings Installation,4457,352,0,168,0,420,420,168,5251.194852,0,5251.194852,,,,2015-08-17 08:00,2015-09-06 16:00,,2015-07-04 08:00,2015-07-24 16:00,2015-07-04 08:00,2015-07-24 16:00,2015-07-04 08:00,2015-07-24 16:00,2015-08-17 08:00,2015-09-06 16:00,,PT_Normal,,,,,ex4kFf3ka0WZMgHT7JqSAQ,TbuGnycV8EGZTsFzieWnPQ,,,N,0,0,,,2014-04-05 12:27,2014-04-05 13:21,admin,admin,
432,140175,1749,36475,642,0,N,N,N,CP_Drtn,TT_Task,DT_FixedDUR2,TK_NotStart,BL2-MEP-AC-5F-2040,Chilled Water Pipes Pressure Test,4457,496,0,48,0,48,48,48,587.116683,0,587.116683,,,,2015-09-25 08:00,2015-09-30 16:00,,2015-07-25 08:00,2015-07-30 16:00,2015-07-25 08:00,2015-07-30 16:00,2015-07-25 08:00,2015-07-30 16:00,2015-09-25 08:00,2015-09-30 16:00,,PT_Normal,,,,,VESYCcD97k6kUC8M9hTOdw,eOkwN1jCYEKqVpwJ8fwcXg,,,N,0,0,,,2014-04-05 12:27,2014-04-05 13:21,admin,admin,
433,140176,1749,36475,642,0,N,N,N,CP_Drtn,TT_Task,DT_FixedDUR2,TK_NotStart,BL2-MEP-AC-5F-2050,Chilled Water Pipes Insulation,4457,1048,72,96,0,192,192,96,1670.208495,0,1670.208495,,,,2015-12-09 08:00,2015-12-20 16:00,,2015-07-31 08:00,2015-08-11 16:00,2015-07-31 08:00,2015-08-11 16:00,2015-07-31 08:00,2015-08-11 16:00,2015-12-09 08:00,2015-12-20 16:00,,PT_Normal,,,,,bUxLDRlnLUOAgI6mBm8mOQ,5UcOhrReM06EkHcBhZGneg,,,N,0,0,,,2014-04-05 12:27,2014-04-05 13:21,admin,admin,
434,140177,1749,36475,642,0,N,N,N,CP_Drtn,TT_Task,DT_FixedDUR2,TK_NotStart,BL2-MEP-AC-5F-2060,Valve Package Installation,4457,496,0,48,0,48,48,48,2386.490429,0,2386.490429,,,,2015-10-01 08:00,2015-10-06 16:00,,2015-07-31 08:00,2015-08-05 16:00,2015-07-31 08:00,2015-08-05 16:00,2015-07-31 08:00,2015-08-05 16:00,2015-10-01 08:00,2015-10-06 16:00,,PT_Normal,,,,,wK4hNQI91kaRAwPpAcJXyg,V6XMoXEtm0uTWPGveXVbZg,,,N,0,0,,,2014-04-05 12:27,2014-04-05 13:21,admin,admin,
435,140178,1749,36475,642,0,N,N,N,CP_Drtn,TT_Task,DT_FixedDUR2,TK_NotStart,BL2-MEP-AC-5F-2070,FCU's Drain Pipes Installation,4457,496,120,24,0,24,24,24,519.927167,0,519.927167,,,,2015-10-07 08:00,2015-10-09 16:00,,2015-08-06 08:00,2015-08-08 16:00,2015-08-06 08:00,2015-08-08 16:00,2015-08-06 08:00,2015-08-08 16:00,2015-10-07 08:00,2015-10-09 16:00,,PT_Normal,,,,,qAaO4pJoh0aSqdEW4Hwl4w,RC0mNWRZ9k6d1mWox+NJsA,,,N,0,0,,,2014-04-05 12:27,2014-04-05 13:21,admin,admin,
436,140179,1749,36367,642,0,N,N,N,CP_Drtn,TT_Task,DT_FixedDUR2,TK_NotStart,BL2-MEP-AC-5F-1000,Supports and Hungers Fixing,,552,80,96,0,192,192,96,338.467259,0,338.467259,,,,2015-08-05 08:00,2015-08-16 16:00,,2015-05-27 08:00,2015-06-08 16:00,2015-05-27 08:00,2015-06-08 16:00,2015-05-27 08:00,2015-06-08 16:00,2015-08-05 08:00,2015-08-16 16:00,,PT_Normal,,,,,STPTQO1hbkm5UUYY+IH9YA,VljHmQRPHUuKpjJQceCwWw,,,N,0,0,,,2014-04-05 12:27,2014-04-05 13:21,admin,admin,
437,140180,1749,36578,642,0,N,N,N,CP_Drtn,TT_Task,DT_FixedDUR2,TK_NotStart,BL2-MEP-PL-5F-2030,Floor Drain Installation,,376,0,48,0,6,6,48,554.143324,0,554.143324,,,,2015-09-28 08:00,2015-10-03 16:00,,2015-08-12 08:00,2015-08-17 16:00,2015-08-12 08:00,2015-08-17 16:00,2015-08-12 08:00,2015-08-17 16:00,2015-09-28 08:00,2015-10-03 16:00,,PT_Normal,,,,,PR68e6C2FEqvGYNjrjFMUA,SvTgZJaTuEy9w850izUFNQ,,,N,0,0,,,2014-04-05 12:27,2014-04-05 13:21,admin,admin,
438,140181,1749,36578,642,0,N,N,N,CP_Drtn,TT_Task,DT_FixedDUR2,TK_NotStart,BL2-MEP-PL-5F-2000,High Level Water Supply Pipes and Fittings Installation,,424,0,168,0,150.02,150.02,168,1329.597866,0,1329.597866,,,,2015-08-26 08:00,2015-09-15 16:00,,2015-07-04 08:00,2015-07-24 16:00,2015-07-04 08:00,2015-07-24 16:00,2015-07-04 08:00,2015-07-24 16:00,2015-08-26 08:00,2015-09-15 16:00,,PT_Normal,,,,,lDntGE31lE+SrZ/pZ1i6dw,+qPPGJLUqkyVxuzCP59j9A,,,N,0,0,,,2014-04-05 12:27,2014-04-05 13:21,admin,admin,
439,140182,1749,36578,642,0,N,N,N,CP_Drtn,TT_Task,DT_FixedDUR2,TK_NotStart,BL2-MEP-PL-5F-2010,High Level Drainage Pipes Installation,,424,0,168,0,244.38,244.38,168,6583.525267,0,6583.525267,,,,2015-08-26 08:00,2015-09-15 16:00,,2015-07-04 08:00,2015-07-24 16:00,2015-07-04 08:00,2015-07-24 16:00,2015-07-04 08:00,2015-07-24 16:00,2015-08-26 08:00,2015-09-15 16:00,,PT_Normal,,,,,PsYwSNpxREK5M0EQeGZiMg,6T6O1RrGUEuUqrqr3kcV1g,,,N,0,0,,,2014-04-05 12:27,2014-04-05 13:21,admin,admin,
440,140183,1749,36578,642,0,N,N,N,CP_Drtn,TT_Task,DT_FixedDUR2,TK_NotStart,BL2-MEP-PL-5F-2020,Water Supply Pipes Pressure Test,4456,568,120,48,0,48,48,48,151.744312,0,151.744312,,,,2015-10-04 08:00,2015-10-09 16:00,,2015-07-25 08:00,2015-07-30 16:00,2015-07-25 08:00,2015-07-30 16:00,2015-07-25 08:00,2015-07-30 16:00,2015-10-04 08:00,2015-10-09 16:00,,PT_Normal,,,,,qQEImy9l7kCAXXRO2r7gyA,c2awsMvls06sEF7x+QeGMQ,,,N,0,0,,,2014-04-05 12:27,2014-04-05 13:21,admin,admin,
441,140184,1749,36578,642,0,N,N,N,CP_Drtn,TT_Task,DT_FixedDUR2,TK_NotStart,BL2-MEP-PL-5F-2040,Drainage Pipes Gravity Test,,376,0,48,0,48,48,48,826.240719,0,826.240719,,,,2015-10-04 08:00,2015-10-09 16:00,,2015-08-18 08:00,2015-08-23 16:00,2015-08-18 08:00,2015-08-23 16:00,2015-08-18 08:00,2015-08-23 16:00,2015-10-04 08:00,2015-10-09 16:00,,PT_Normal,,,,,yFhrk0WZQkOlFCLQCRrz/A,/Oz4cNG5lU2pM3qaPovDMA,,,N,0,0,,,2014-04-05 12:27,2014-04-05 13:21,admin,admin,
442,140185,1749,36579,642,0,N,N,N,CP_Drtn,TT_Task,DT_FixedDUR2,TK_NotStart,BL2-MEP-PL-5F-3000,Sanitary Ware Installation Including Connection,,400,0,112,0,383.862,383.862,112,4453.516455,0,4453.516455,,,,2015-11-18 08:00,2015-12-01 16:00,,2015-09-29 08:00,2015-10-12 16:00,2015-09-29 08:00,2015-10-12 16:00,2015-09-29 08:00,2015-10-12 16:00,2015-11-18 08:00,2015-12-01 16:00,,PT_Normal,,,,,ujThcBmN6Em+8OjgYrAHVg,F4Oi2FdyUEOgEQecWVlpXw,,,N,0,0,,,2014-04-05 12:27,2014-04-05 13:21,admin,admin,
443,140186,1749,36579,642,0,N,N,N,CP_Drtn,TT_Task,DT_FixedDUR2,TK_NotStart,BL2-MEP-PL-5F-3010,Sanitary Ware Accessories Installation,,592,0,48,0,36.45,36.45,48,166.215378,0,166.215378,,,,2015-12-26 08:00,2015-12-31 16:00,,2015-10-13 08:00,2015-10-18 16:00,2015-10-13 08:00,2015-10-18 16:00,2015-10-13 08:00,2015-10-18 16:00,2015-12-26 08:00,2015-12-31 16:00,,PT_Normal,,,,,FIn9Bh/fJEmotTgMdGKnKQ,Js35lNLbr0G6wizzIYkvlA,,,N,0,0,,,2014-04-05 12:27,2014-04-05 13:21,admin,admin,
444,140187,1749,36580,642,0,N,N,N,CP_Drtn,TT_Task,DT_FixedDUR2,TK_NotStart,BL2-MEP-PL-5F-1000,Low Level Water Supply Pipes Installation,,376,0,96,0,42,42,96,725.216846,0,725.216846,,,,2015-07-14 08:00,2015-07-25 16:00,,2015-05-27 08:00,2015-06-08 16:00,2015-05-27 08:00,2015-06-08 16:00,2015-05-27 08:00,2015-06-08 16:00,2015-07-14 08:00,2015-07-25 16:00,,PT_Normal,,,,,VIinEJK5+E+7mQGNguHd4Q,Lv8/FFd4pE2a5I5Zwg4GCg,,,N,0,0,,,2014-04-05 12:27,2014-04-05 13:21,admin,admin,
445,140188,1749,36580,642,0,N,N,N,CP_Drtn,TT_Task,DT_FixedDUR2,TK_NotStart,BL2-MEP-PL-5F-1010,Low Level Drainage Pipes Installation,,376,0,96,0,12.67,12.67,96,2291.461713,0,2291.461713,,,,2015-07-14 08:00,2015-07-25 16:00,,2015-05-27 08:00,2015-06-08 16:00,2015-05-27 08:00,2015-06-08 16:00,2015-05-27 08:00,2015-06-08 16:00,2015-07-14 08:00,2015-07-25 16:00,,PT_Normal,,,,,ixiLyd96PkGPwxOqg8q2Tg,YAjnsitIoEqpNof3/iwn5g,,,N,0,0,,,2014-04-05 12:27,2014-04-05 13:21,admin,admin,
446,140189,1749,36580,642,0,N,N,N,CP_Drtn,TT_Task,DT_FixedDUR2,TK_NotStart,BL2-MEP-PL-5F-1020,Supports  installation for High level Pipes,,624,80,96,0,16.352,16.352,96,831.682549,0,831.682549,,,,2015-08-14 08:00,2015-08-25 16:00,,2015-05-27 08:00,2015-06-08 16:00,2015-05-27 08:00,2015-06-08 16:00,2015-05-27 08:00,2015-06-08 16:00,2015-08-14 08:00,2015-08-25 16:00,,PT_Normal,,,,,0ofm//o5qEupW0LbJq2QRA,bXNbKv0LKkKaYLOBob/iqw,,,N,0,0,,,2014-04-05 12:27,2014-04-05 13:21,admin,admin,
447,140190,1749,36582,642,0,N,N,N,CP_Drtn,TT_Task,DT_FixedDUR2,TK_NotStart,BL2-MEP-FF-5F-3000,Fire Extinguisher Installation,,912,160,16,0,8,8,16,1076.993507,0,1076.993507,,,,2016-02-05 08:00,2016-02-06 16:00,,2015-10-14 08:00,2015-10-15 16:00,2015-10-14 08:00,2015-10-15 16:00,2015-10-14 08:00,2015-10-15 16:00,2016-02-05 08:00,2016-02-06 16:00,,PT_Normal,,,,,aizx4gVmG0yuU+KT6xyVCA,29oC939Ax0e5qbWRiK7+Ng,,,N,0,0,,,2014-04-05 12:27,2014-04-05 13:21,admin,admin,
448,140191,1749,36582,642,0,N,N,N,CP_Drtn,TT_Task,DT_FixedDUR2,TK_NotStart,BL2-MEP-FF-5F-3010,Hose reel Cabinet Installation and Connection,,792,0,48,0,192,192,48,1336.852298,0,1336.852298,,,,2016-01-20 08:00,2016-01-25 16:00,,2015-10-13 08:00,2015-10-18 16:00,2015-10-13 08:00,2015-10-18 16:00,2015-10-13 08:00,2015-10-18 16:00,2016-01-20 08:00,2016-01-25 16:00,,PT_Normal,,,,,J6q00UxOxU6PJCev2/nRTw,3Y9wEoUTI0mclby0ZvgBOA,,,N,0,0,,,2014-04-05 12:27,2014-04-05 13:21,admin,admin,
449,140192,1749,36107,642,0,N,N,N,CP_Drtn,TT_Task,DT_FixedDUR2,TK_NotStart,BL2-MEP-EL-5F-1000,PVC Back Boxes and Conduits  Fixing in Wall,,384,72,96,0,384,384,96,3319.67233,0,3319.67233,,,,2015-07-06 08:00,2015-07-17 16:00,,2015-05-17 08:00,2015-05-30 16:00,2015-05-17 08:00,2015-05-30 16:00,2015-05-17 08:00,2015-05-30 16:00,2015-07-06 08:00,2015-07-17 16:00,,PT_Normal,,,,,2O6eY13zSEqUJ1PnuKrTJA,IdjMu7shVUiF4MuP8pVgQw,,,N,0,0,,,2014-04-05 12:27,2014-04-05 13:21,admin,admin,
450,140193,1749,36107,642,0,N,N,N,CP_Drtn,TT_Task,DT_FixedDUR2,TK_NotStart,BL2-MEP-EL-5F-1010,DB's Inclosure Fixing,4455,424,48,48,0,96,96,48,2136.399392,0,2136.399392,,,,2015-07-20 08:00,2015-07-25 16:00,,2015-05-27 08:00,2015-06-02 16:00,2015-05-27 08:00,2015-06-02 16:00,2015-05-27 08:00,2015-06-02 16:00,2015-07-20 08:00,2015-07-25 16:00,,PT_Normal,,,,,kntJU3i4xE+5Xre5YDduSQ,EAVkpFWMEE6cLqEn8Hyp2w,,,N,0,0,,,2014-04-05 12:27,2014-04-05 13:21,admin,admin,
451,140194,1749,36108,642,0,N,N,N,CP_Drtn,TT_Task,DT_FixedDUR2,TK_NotStart,BL2-MEP-EL-5F-2060,SMDB's  Installation,,1400,128,48,0,45,45,48,4202.598932,0,4202.598932,,,,2016-01-04 08:00,2016-01-09 16:00,,2015-07-13 08:00,2015-07-18 16:00,2015-07-13 08:00,2015-07-18 16:00,2015-07-13 08:00,2015-07-18 16:00,2016-01-04 08:00,2016-01-09 16:00,,PT_Normal,,,,,9eIFgV0uGkKmaD5KrEDcXQ,hQGmB3+7KEKT64ndaLP0uQ,,,N,0,0,,,2014-04-05 12:27,2014-04-05 13:21,admin,admin,
452,140195,1749,36108,642,0,N,N,N,CP_Drtn,TT_Task,DT_FixedDUR2,TK_NotStart,BL2-MEP-EL-5F-2000,Lighting  Wiring,,736,80,96,0,241.713,241.713,96,3578.08423,0,3578.08423,,,,2015-09-28 08:00,2015-10-09 16:00,,2015-06-28 08:00,2015-07-09 16:00,2015-06-28 08:00,2015-07-09 16:00,2015-06-28 08:00,2015-07-09 16:00,2015-09-28 08:00,2015-10-09 16:00,,PT_Normal,,,,,zqBqafGMMUugIMiJ3e8JGw,ptL2W04lB0SKysiWX+o8qQ,,,N,0,0,,,2014-04-05 12:27,2014-04-05 13:21,admin,admin,
453,140196,1749,36108,642,0,N,N,N,CP_Drtn,TT_Task,DT_FixedDUR2,TK_NotStart,BL2-MEP-EL-5F-2010,Power Points Wiring,,736,80,96,0,192,192,96,2906.213289,0,2906.213289,,,,2015-09-28 08:00,2015-10-09 16:00,,2015-06-28 08:00,2015-07-09 16:00,2015-06-28 08:00,2015-07-09 16:00,2015-06-28 08:00,2015-07-09 16:00,2015-09-28 08:00,2015-10-09 16:00,,PT_Normal,,,,,3cJ8u+ZgmkOAc45vmbMUjA,s6i1Nh+CyU6gTju6iFvYiw,,,N,0,0,,,2014-04-05 12:27,2014-04-05 13:21,admin,admin,
454,140197,1749,36108,642,0,N,N,N,CP_Drtn,TT_Task,DT_FixedDUR2,TK_NotStart,BL2-MEP-EL-5F-2020,Cable Tray and Trunking Installation,,720,64,112,0,336,336,112,9078.448617,0,9078.448617,,,,2015-09-26 08:00,2015-10-09 16:00,,2015-06-28 08:00,2015-07-11 16:00,2015-06-28 08:00,2015-07-11 16:00,2015-06-28 08:00,2015-07-11 16:00,2015-09-26 08:00,2015-10-09 16:00,,PT_Normal,,,,,kl/IEnT+mUa8UffiNbbdJw,f9l1CNrlDU+792BT5D6xSA,,,N,0,0,,,2014-04-05 12:27,2014-04-05 13:21,admin,admin,
455,140198,1749,36108,642,0,N,N,N,CP_Drtn,TT_Task,DT_FixedDUR2,TK_NotStart,BL2-MEP-EL-5F-2030,Emergency Light Wiring,,768,112,64,0,128,128,64,1210.028798,0,1210.028798,,,,2015-10-02 08:00,2015-10-09 16:00,,2015-06-28 08:00,2015-07-05 16:00,2015-06-28 08:00,2015-07-05 16:00,2015-06-28 08:00,2015-07-05 16:00,2015-10-02 08:00,2015-10-09 16:00,,PT_Normal,,,,,Vj/rHnIY60iFcSGCewHqtQ,7+pIRXWqZUS79ESuV1UiRw,,,N,0,0,,,2014-04-05 12:27,2014-04-05 13:21,admin,admin,
456,140199,1749,36108,642,0,N,N,N,CP_Drtn,TT_Task,DT_FixedDUR2,TK_NotStart,BL2-MEP-EL-5F-2040,Fire Alarm System Wiring,,736,80,96,0,192,192,96,7123.009694,0,7123.009694,,,,2015-09-28 08:00,2015-10-09 16:00,,2015-06-28 08:00,2015-07-09 16:00,2015-06-28 08:00,2015-07-09 16:00,2015-06-28 08:00,2015-07-09 16:00,2015-09-28 08:00,2015-10-09 16:00,,PT_Normal,,,,,dLzgJxt0iEaSNL/lJmFyiw,kg7DzMv30kecvBkAEDHEiA,,,N,0,0,,,2014-04-05 12:27,2014-04-05 13:21,admin,admin,
457,140200,1749,36108,642,0,N,N,N,CP_Drtn,TT_Task,DT_FixedDUR2,TK_NotStart,BL2-MEP-EL-5F-2070,DB's Installation and Termination,4455,616,0,96,0,288,288,96,4982.925025,0,4982.925025,,,,2015-09-28 08:00,2015-10-09 16:00,,2015-07-13 08:00,2015-07-24 16:00,2015-07-13 08:00,2015-07-24 16:00,2015-07-13 08:00,2015-07-24 16:00,2015-09-28 08:00,2015-10-09 16:00,,PT_Normal,,,,,5SyekXBRvUG11+rS1/DAGg,c4wvLZ2xyUe/hJztISHLhQ,,,N,0,0,,,2014-04-05 12:27,2014-04-05 13:21,admin,admin,
458,140201,1749,36108,642,0,N,N,N,CP_Drtn,TT_Task,DT_FixedDUR2,TK_NotStart,BL2-MEP-EL-5F-2050,Low Current  System Wiring,4455,1512,392,112,0,244,244,112,38231.783306,0,38231.783306,,,,2016-01-03 08:00,2016-01-16 16:00,,2015-06-28 08:00,2015-07-11 16:00,2015-06-28 08:00,2015-07-11 16:00,2015-06-28 08:00,2015-07-11 16:00,2016-01-03 08:00,2016-01-16 16:00,,PT_Normal,,,,,o+QIPs0DD0GaEs4J6SakOw,Wl1hJhIYsUqzKnYKQnc1YA,,,N,0,0,,,2014-04-05 12:27,2014-04-05 13:21,admin,admin,
459,140202,1749,36109,642,0,N,N,N,CP_Drtn,TT_Task,DT_FixedDUR2,TK_NotStart,BL2-MEP-EL-5F-3010,Lights Fitting Fixing,,808,64,112,0,244,244,112,7336.659378,0,7336.659378,,,,2015-12-09 08:00,2015-12-22 16:00,,2015-08-30 08:00,2015-09-12 16:00,2015-08-30 08:00,2015-09-12 16:00,2015-08-30 08:00,2015-09-12 16:00,2015-12-09 08:00,2015-12-22 16:00,,PT_Normal,,,,,A7AHi+WCIUutZd24VLWc/Q,RoQv2ZcRw0aNpmoojEHsuQ,,,N,0,0,,,2014-04-05 12:27,2014-04-05 13:21,admin,admin,
460,140203,1749,36109,642,0,N,N,N,CP_Drtn,TT_Task,DT_FixedDUR2,TK_NotStart,BL2-MEP-EL-5F-3070,Sockets and Switches Fixing,,1048,112,64,0,128,128,64,1174.957134,0,1174.957134,,,,2016-01-08 08:00,2016-01-15 16:00,,2015-08-30 08:00,2015-09-06 16:00,2015-08-30 08:00,2015-09-06 16:00,2015-08-30 08:00,2015-09-06 16:00,2016-01-08 08:00,2016-01-15 16:00,,PT_Normal,,,,,WtER0zlnyk6XrjuAjhoMjg,4egim8tlmEqIGTUsp4lYjQ,,,N,0,0,,,2014-04-05 12:27,2014-04-05 13:21,admin,admin,
461,140204,1749,36109,642,0,N,N,N,CP_Drtn,TT_Task,DT_FixedDUR2,TK_NotStart,BL2-MEP-EL-5F-3020,Emergency Light Fixing,,1104,112,64,0,128,128,64,5722.024623,0,5722.024623,,,,2016-01-15 08:00,2016-01-22 16:00,,2015-08-30 08:00,2015-09-06 16:00,2015-08-30 08:00,2015-09-06 16:00,2015-08-30 08:00,2015-09-06 16:00,2016-01-15 08:00,2016-01-22 16:00,,PT_Normal,,,,,m30bExIIMEWR05S36EllzQ,7rcgYlFiGE6Yj98y+sHMSQ,,,N,0,0,,,2014-04-05 12:27,2014-04-05 13:21,admin,admin,
462,140205,1749,36109,642,0,N,N,N,CP_Drtn,TT_Task,DT_FixedDUR2,TK_NotStart,BL2-MEP-EL-5F-3030,Fire Alarm System Detector Installation,,888,80,96,0,192,192,96,4046.378277,0,4046.378277,,,,2015-12-19 08:00,2015-12-30 16:00,,2015-08-30 08:00,2015-09-10 16:00,2015-08-30 08:00,2015-09-10 16:00,2015-08-30 08:00,2015-09-10 16:00,2015-12-19 08:00,2015-12-30 16:00,,PT_Normal,,,,,IlLKqhc6zkSV5B9Ox3xXSA,ta39IqUM002xTF+gH5IupA,,,N,0,0,,,2014-04-05 12:27,2014-04-05 13:21,admin,admin,
463,140206,1749,36109,642,0,N,N,N,CP_Drtn,TT_Task,DT_FixedDUR2,TK_NotStart,BL2-MEP-EL-5F-3060,SMDB's  Termination and Final Connection,,1064,128,48,0,192,192,48,2791.825001,0,2791.825001,,,,2016-01-10 08:00,2016-01-15 16:00,,2015-08-30 08:00,2015-09-04 16:00,2015-08-30 08:00,2015-09-04 16:00,2015-08-30 08:00,2015-09-04 16:00,2016-01-10 08:00,2016-01-15 16:00,,PT_Normal,,,,,Mk+wNbUnM0SL2wbjSg8Hkg,OUVC6l4iKkGuMpHbUOn1cQ,,,N,0,0,,,2014-04-05 12:27,2014-04-05 13:21,admin,admin,
464,140207,1749,36108,642,0,N,N,N,CP_Drtn,TT_Task,DT_FixedDUR2,TK_NotStart,BL2-MEP-EL-5F-3000,Power Cable Puling,,984,64,112,0,168,168,112,6375.759893,0,6375.759893,,,,2015-11-25 08:00,2015-12-08 16:00,,2015-07-25 08:00,2015-08-07 16:00,2015-07-25 08:00,2015-08-07 16:00,2015-07-25 08:00,2015-08-07 16:00,2015-11-25 08:00,2015-12-08 16:00,,PT_Normal,,,,,4oVKt6z/Ok6cRJm7ZOaGcA,Crt+elUzLkKElCUNGnFfsA,,,N,0,0,,,2014-04-05 12:27,2014-04-05 13:21,admin,admin,
465,140208,1749,36109,642,0,N,N,N,CP_Drtn,TT_Task,DT_FixedDUR2,TK_NotStart,BL2-MEP-EL-5F-3040,Despature for Low Current  System Installation,4455,1120,0,112,0,336,336,112,72752.164276,0,72752.164276,,,,2016-01-17 08:00,2016-01-30 16:00,,2015-08-30 08:00,2015-09-12 16:00,2015-08-30 08:00,2015-09-12 16:00,2015-08-30 08:00,2015-09-12 16:00,2016-01-17 08:00,2016-01-30 16:00,,PT_Normal,,,,,Y/hJo7K0u0Sb85FoK7cyMg,DOITw0K8dkiiplGUCKWi4w,,,N,0,0,,,2014-04-05 12:27,2014-04-05 13:21,admin,admin,
466,140209,1749,36109,642,0,N,N,N,CP_Drtn,TT_Task,DT_FixedDUR2,TK_NotStart,BL2-MEP-EL-5F-3050,Low Current  System Outlet installation and Connection,4455,1120,208,80,0,80,80,80,3870.787498,0,3870.787498,,,,2016-01-31 08:00,2016-02-09 16:00,,2015-09-13 08:00,2015-09-22 16:00,2015-09-13 08:00,2015-09-22 16:00,2015-09-13 08:00,2015-09-22 16:00,2016-01-31 08:00,2016-02-09 16:00,,PT_Normal,,,,,J2BkvYwmFEKgyG+knevclw,kg4yf0KnWkqy7MhDa3RgXw,,,N,0,0,,,2014-04-05 12:27,2014-04-05 13:21,admin,admin,
467,140210,1749,36323,642,0,N,N,N,CP_Drtn,TT_Task,DT_FixedDUR2,TK_NotStart,BL3-MEP-FF-2F-3000,Fire Extinguisher Installation,,272,32,16,0,8,8,16,1076.993507,0,1076.993507,,,,2016-01-23 08:00,2016-01-24 16:00,,2015-12-20 08:00,2015-12-21 16:00,2015-12-20 08:00,2015-12-21 16:00,2015-12-20 08:00,2015-12-21 16:00,2016-01-23 08:00,2016-01-24 16:00,,PT_Normal,,,,,SIJRUoBFqEKmhgzJhxWe8A,9JqkOciM5ECplyDPi+0NUQ,,,N,0,0,,,2014-04-05 12:27,2014-04-05 13:21,admin,admin,
468,140211,1749,36323,642,0,N,N,N,CP_Drtn,TT_Task,DT_FixedDUR2,TK_NotStart,BL3-MEP-FF-2F-3010,Hose reel Cabinet Installation and Connection,,48,0,48,0,192,192,48,1336.852298,0,1336.852298,,,,2015-12-25 08:00,2015-12-30 16:00,,2015-12-19 08:00,2015-12-24 16:00,2015-12-19 08:00,2015-12-24 16:00,2015-12-19 08:00,2015-12-24 16:00,2015-12-25 08:00,2015-12-30 16:00,,PT_Normal,,,,,yNSBQtuDekqTnTwa5QTOag,oQG341Jr40i0+RxCv/rrzQ,,,N,0,0,,,2014-04-05 12:27,2014-04-05 13:21,admin,admin,
469,140212,1749,36496,642,0,N,N,N,CP_Drtn,TT_Task,DT_FixedDUR2,TK_NotStart,BL3-MEP-AC-2F-3000,Grills and Diffusers Fixing,,904,56,96,0,384,384,96,11550.608192,0,11550.608192,,,,2015-10-28 08:00,2015-11-08 16:00,,2015-07-07 08:00,2015-07-18 16:00,2015-07-07 08:00,2015-07-18 16:00,2015-07-07 08:00,2015-07-18 16:00,2015-10-28 08:00,2015-11-08 16:00,,PT_Normal,,,,,LQH1w1WeYEek26BckQJNwA,W4+rCdxFoUORx6Y0Y2Oorg,,,N,0,0,,,2014-04-05 12:27,2014-04-05 13:21,admin,admin,
470,140213,1749,36388,642,0,N,N,N,CP_Drtn,TT_Task,DT_FixedDUR2,TK_NotStart,BL3-MEP-AC-2F-1000,Supports and Hungers Fixing,,136,32,96,0,192,192,96,338.467259,0,338.467259,,,,2015-05-07 08:00,2015-05-20 16:00,,2015-04-18 08:00,2015-04-30 16:00,2015-04-18 08:00,2015-04-30 16:00,2015-04-18 08:00,2015-04-30 16:00,2015-05-07 08:00,2015-05-20 16:00,,PT_Normal,,,,,tDujncJigkuAoxnWrPhY2A,2+WxC0wCekGSkHh8pIf0Xg,,,N,0,0,,,2014-04-05 12:27,2014-04-05 13:21,admin,admin,
471,140214,1749,36430,642,0,N,N,N,CP_Drtn,TT_Task,DT_FixedDUR2,TK_NotStart,BL3-MEP-AC-2F-2010,Duct Installation and Insulation,4454,112,0,168,0,263,263,168,4350.939473,0,4350.939473,,,,2015-05-23 08:00,2015-06-13 16:00,,2015-05-06 08:00,2015-05-30 16:00,2015-05-06 08:00,2015-05-30 16:00,2015-05-06 08:00,2015-05-30 16:00,2015-05-23 08:00,2015-06-13 16:00,,PT_Normal,,,,,qavLtk/fkUi8mKng57JHRg,44p88XlZVk2KnfWjKUAGBw,,,N,0,0,,,2014-04-05 12:27,2014-04-05 13:21,admin,admin,
472,140215,1749,36430,642,0,N,N,N,CP_Drtn,TT_Task,DT_FixedDUR2,TK_NotStart,BL3-MEP-AC-2F-2030,Duct Accessories Installation,4457,448,56,112,0,448,448,112,666.965527,0,666.965527,,,,2015-07-26 08:00,2015-08-08 16:00,,2015-05-31 08:00,2015-06-13 16:00,2015-05-31 08:00,2015-06-13 16:00,2015-05-31 08:00,2015-06-13 16:00,2015-07-26 08:00,2015-08-08 16:00,,PT_Normal,,,,,W83NdtPFlEmI4zbjMJzLdw,ORzU6gjnVUmsnXgINaLdXg,,,N,0,0,,,2014-04-05 12:27,2014-04-05 13:21,admin,admin,
473,140216,1749,36430,642,0,N,N,N,CP_Drtn,TT_Task,DT_FixedDUR2,TK_NotStart,BL3-MEP-AC-2F-2000,FCU's Installation,4457,512,72,64,0,192,192,64,6000.055155,0,6000.055155,,,,2015-07-23 08:00,2015-07-30 16:00,,2015-05-18 08:00,2015-05-26 16:00,2015-05-18 08:00,2015-05-26 16:00,2015-05-18 08:00,2015-05-26 16:00,2015-07-23 08:00,2015-07-30 16:00,,PT_Normal,,,,,aN5X5y8ERU2H2b3kfXzoVQ,wZUuQAYwl0WSEUfKZ+ioCg,,,N,0,0,,,2014-04-05 12:27,2014-04-05 13:21,admin,admin,
474,140217,1749,36430,642,0,N,N,N,CP_Drtn,TT_Task,DT_FixedDUR2,TK_NotStart,BL3-MEP-AC-2F-2020,Chilled Water Pipes and Fittings Installation,4457,104,0,168,0,840,840,168,5251.194852,0,5251.194852,,,,2015-05-21 08:00,2015-06-12 16:00,,2015-05-06 08:00,2015-05-30 16:00,2015-05-06 08:00,2015-05-30 16:00,2015-05-06 08:00,2015-05-30 16:00,2015-05-21 08:00,2015-06-12 16:00,,PT_Normal,,,,,F3cPuZ+R1kiwbRLPMZjDgg,w6DTutLibUefrGErajTsoQ,,,N,0,0,,,2014-04-05 12:27,2014-04-05 13:21,admin,admin,
475,140218,1749,36430,642,0,N,N,N,CP_Drtn,TT_Task,DT_FixedDUR2,TK_NotStart,BL3-MEP-AC-2F-2040,Chilled Water Pipes Pressure Test,4457,440,0,48,0,96,96,48,587.116683,0,587.116683,,,,2015-07-25 08:00,2015-07-30 16:00,,2015-05-31 08:00,2015-06-05 16:00,2015-05-31 08:00,2015-06-05 16:00,2015-05-31 08:00,2015-06-05 16:00,2015-07-25 08:00,2015-07-30 16:00,,PT_Normal,,,,,JRFTSX9lWEWUnrWmdHddpQ,C5sXHtaMH0aX+4iNpWpWTA,,,N,0,0,,,2014-04-05 12:27,2014-04-05 13:21,admin,admin,
476,140219,1749,36430,642,0,N,N,N,CP_Drtn,TT_Task,DT_FixedDUR2,TK_NotStart,BL3-MEP-AC-2F-2050,Chilled Water Pipes Insulation,4457,1152,72,96,0,384,384,96,1670.208495,0,1670.208495,,,,2015-10-28 08:00,2015-11-08 16:00,,2015-06-06 08:00,2015-06-17 16:00,2015-06-06 08:00,2015-06-17 16:00,2015-06-06 08:00,2015-06-17 16:00,2015-10-28 08:00,2015-11-08 16:00,,PT_Normal,,,,,j5TgwGe7/EekbtTduVGxrg,iVDr8FvxdUifcpBrOzR4pw,,,N,0,0,,,2014-04-05 12:27,2014-04-05 13:21,admin,admin,
477,140220,1749,36430,642,0,N,N,N,CP_Drtn,TT_Task,DT_FixedDUR2,TK_NotStart,BL3-MEP-AC-2F-2060,Valve Package Installation,4457,440,0,48,0,96,96,48,2386.490429,0,2386.490429,,,,2015-07-31 08:00,2015-08-05 16:00,,2015-06-06 08:00,2015-06-11 16:00,2015-06-06 08:00,2015-06-11 16:00,2015-06-06 08:00,2015-06-11 16:00,2015-07-31 08:00,2015-08-05 16:00,,PT_Normal,,,,,gdtsvX17rkm5q1eeIa5K1Q,iG/sfkdg/kuksiDSNv6m2g,,,N,0,0,,,2014-04-05 12:27,2014-04-05 13:21,admin,admin,
478,140221,1749,36430,642,0,N,N,N,CP_Drtn,TT_Task,DT_FixedDUR2,TK_NotStart,BL3-MEP-AC-2F-2070,FCU's Drain Pipes Installation,4457,440,128,24,0,48,48,24,519.927167,0,519.927167,,,,2015-08-06 08:00,2015-08-08 16:00,,2015-06-12 08:00,2015-06-14 16:00,2015-06-12 08:00,2015-06-14 16:00,2015-06-12 08:00,2015-06-14 16:00,2015-08-06 08:00,2015-08-08 16:00,,PT_Normal,,,,,Y/XAkVLCoE+j6DYnve4jQw,OPFr/i7RwEaT5GGtpMgB1g,,,N,0,0,,,2014-04-05 12:27,2014-04-05 13:21,admin,admin,
479,140222,1749,36600,642,0,N,N,N,CP_Drtn,TT_Task,DT_FixedDUR2,TK_NotStart,BL3-MEP-PL-2F-1000,Low Level Water Supply Pipes Installation,,208,32,96,0,42,42,96,725.216846,0,725.216846,,,,2015-05-18 08:00,2015-05-31 16:00,,2015-04-18 08:00,2015-04-30 16:00,2015-04-18 08:00,2015-04-30 16:00,2015-04-18 08:00,2015-04-30 16:00,2015-05-18 08:00,2015-05-31 16:00,,PT_Normal,,,,,7FPKpjEB2UqR+s52RvxRUQ,R0h0HKRayUCfwG12RzipyA,,,N,0,0,,,2014-04-05 12:27,2014-04-05 13:21,admin,admin,
480,140223,1749,36600,642,0,N,N,N,CP_Drtn,TT_Task,DT_FixedDUR2,TK_NotStart,BL3-MEP-PL-2F-1010,Low Level Drainage Pipes Installation,,208,32,96,0,12.67,12.67,96,2291.461713,0,2291.461713,,,,2015-05-18 08:00,2015-05-31 16:00,,2015-04-18 08:00,2015-04-30 16:00,2015-04-18 08:00,2015-04-30 16:00,2015-04-18 08:00,2015-04-30 16:00,2015-05-18 08:00,2015-05-31 16:00,,PT_Normal,,,,,h75G96uWekKYiR1rw51f9w,4TIY+dHV20CDPEfh1i/iyw,,,N,0,0,,,2014-04-05 12:27,2014-04-05 13:21,admin,admin,
481,140224,1749,36600,642,0,N,N,N,CP_Drtn,TT_Task,DT_FixedDUR2,TK_NotStart,BL3-MEP-PL-2F-1020,Supports  installation for High level Pipes,,208,32,96,0,16.352,16.352,96,831.682549,0,831.682549,,,,2015-05-18 08:00,2015-05-31 16:00,,2015-04-18 08:00,2015-04-30 16:00,2015-04-18 08:00,2015-04-30 16:00,2015-04-18 08:00,2015-04-30 16:00,2015-05-18 08:00,2015-05-31 16:00,,PT_Normal,,,,,3imYqjRAvEGGOGdDQ4flrQ,OyB68kNjsUC5qOoqissoKg,,,N,0,0,,,2014-04-05 12:27,2014-04-05 13:21,admin,admin,
482,140225,1749,36601,642,0,N,N,N,CP_Drtn,TT_Task,DT_FixedDUR2,TK_NotStart,BL3-MEP-PL-2F-3000,Sanitary Ware Installation Including Connection,,352,0,112,0,383.862,383.862,112,4453.516455,0,4453.516455,,,,2015-09-21 08:00,2015-10-04 16:00,,2015-08-08 08:00,2015-08-21 16:00,2015-08-08 08:00,2015-08-21 16:00,2015-08-08 08:00,2015-08-21 16:00,2015-09-21 08:00,2015-10-04 16:00,,PT_Normal,,,,,E1qcZgh4JkSLGcQ3+NBY9Q,h2IdEdVzF0GZY/4gxOrruw,,,N,0,0,,,2014-04-05 12:27,2014-04-05 13:21,admin,admin,
483,140226,1749,36601,642,0,N,N,N,CP_Drtn,TT_Task,DT_FixedDUR2,TK_NotStart,BL3-MEP-PL-2F-3010,Sanitary Ware Accessories Installation,,864,88,48,0,36.45,36.45,48,166.215378,0,166.215378,,,,2015-12-08 08:00,2015-12-13 16:00,,2015-08-22 08:00,2015-08-27 16:00,2015-08-22 08:00,2015-08-27 16:00,2015-08-22 08:00,2015-08-27 16:00,2015-12-08 08:00,2015-12-13 16:00,,PT_Normal,,,,,CniA8GgWf0CAOQ4Yq2fUJw,5XN7BJ0ABE2xdnCKHvVLcg,,,N,0,0,,,2014-04-05 12:27,2014-04-05 13:21,admin,admin,
484,140227,1749,36602,642,0,N,N,N,CP_Drtn,TT_Task,DT_FixedDUR2,TK_NotStart,BL3-MEP-PL-2F-2030,Floor Drain Installation,,1272,104,48,0,6,6,48,554.143324,0,554.143324,,,,2015-12-13 08:00,2015-12-18 16:00,,2015-07-07 08:00,2015-07-12 16:00,2015-07-07 08:00,2015-07-12 16:00,2015-07-07 08:00,2015-07-12 16:00,2015-12-13 08:00,2015-12-18 16:00,,PT_Normal,,,,,UWtcpmRYK0Od5PDXJGCrrA,hr0fqT2ZUEiCjR4jg5sXYg,,,N,0,0,,,2014-04-05 12:27,2014-04-05 13:21,admin,admin,
485,140228,1749,36602,642,0,N,N,N,CP_Drtn,TT_Task,DT_FixedDUR2,TK_NotStart,BL3-MEP-PL-2F-2000,High Level Water Supply Pipes and Fittings Installation,,176,0,168,0,150.02,150.02,168,1329.597866,0,1329.597866,,,,2015-06-01 08:00,2015-06-21 16:00,,2015-05-06 08:00,2015-05-30 16:00,2015-05-06 08:00,2015-05-30 16:00,2015-05-06 08:00,2015-05-30 16:00,2015-06-01 08:00,2015-06-21 16:00,,PT_Normal,,,,,SjqKyKrR9kqa12GzLtnJTQ,I4QSrjnmnUSpK82CP+Kxtg,,,N,0,0,,,2014-04-05 12:27,2014-04-05 13:21,admin,admin,
486,140229,1749,36602,642,0,N,N,N,CP_Drtn,TT_Task,DT_FixedDUR2,TK_NotStart,BL3-MEP-PL-2F-2010,High Level Drainage Pipes Installation,,176,0,168,0,244.38,244.38,168,6583.525267,0,6583.525267,,,,2015-06-01 08:00,2015-06-21 16:00,,2015-05-06 08:00,2015-05-30 16:00,2015-05-06 08:00,2015-05-30 16:00,2015-05-06 08:00,2015-05-30 16:00,2015-06-01 08:00,2015-06-21 16:00,,PT_Normal,,,,,cgR/HZZZwEiRrRgoAhU4ug,W81+CoZN3U+WUsvSI+qTMA,,,N,0,0,,,2014-04-05 12:27,2014-04-05 13:21,admin,admin,
487,140230,1749,36602,642,0,N,N,N,CP_Drtn,TT_Task,DT_FixedDUR2,TK_NotStart,BL3-MEP-PL-2F-2020,Water Supply Pipes Pressure Test,4456,512,120,48,0,48,48,48,151.744312,0,151.744312,,,,2015-08-03 08:00,2015-08-08 16:00,,2015-05-31 08:00,2015-06-05 16:00,2015-05-31 08:00,2015-06-05 16:00,2015-05-31 08:00,2015-06-05 16:00,2015-08-03 08:00,2015-08-08 16:00,,PT_Normal,,,,,vPXt023ULkO2Z+UXsqCaEA,+AG0p6O9kkuh1CYKLOlhmw,,,N,0,0,,,2014-04-05 12:27,2014-04-05 13:21,admin,admin,
488,140231,1749,36602,642,0,N,N,N,CP_Drtn,TT_Task,DT_FixedDUR2,TK_NotStart,BL3-MEP-PL-2F-2040,Drainage Pipes Gravity Test,,512,120,48,0,48,48,48,826.240719,0,826.240719,,,,2015-08-03 08:00,2015-08-08 16:00,,2015-05-31 08:00,2015-06-05 16:00,2015-05-31 08:00,2015-06-05 16:00,2015-05-31 08:00,2015-06-05 16:00,2015-08-03 08:00,2015-08-08 16:00,,PT_Normal,,,,,mHngxGyD2ky+vzjo7UQ6yw,0UAtuXQqA0G5OnLQ+mqFgQ,,,N,0,0,,,2014-04-05 12:27,2014-04-05 13:21,admin,admin,
489,140232,1749,36186,642,0,N,N,N,CP_Drtn,TT_Task,DT_FixedDUR2,TK_NotStart,BL3-MEP-EL-2F-2060,SMDB's  Installation,,1496,104,48,0,45,45,48,4202.598932,0,4202.598932,,,,2015-12-11 08:00,2015-12-16 16:00,,2015-06-07 08:00,2015-06-12 16:00,2015-06-07 08:00,2015-06-12 16:00,2015-06-07 08:00,2015-06-12 16:00,2015-12-11 08:00,2015-12-16 16:00,,PT_Normal,,,,,E6iWqZaYS0aQCKuU+Q9LVw,RwmwppkNokmKMYQ5rUs7FQ,,,N,0,0,,,2014-04-05 12:27,2014-04-05 13:21,admin,admin,
490,140233,1749,36186,642,0,N,N,N,CP_Drtn,TT_Task,DT_FixedDUR2,TK_NotStart,BL3-MEP-EL-2F-2010,Lighting  Wiring,,584,56,96,0,241.713,241.713,96,3578.08423,0,3578.08423,,,,2015-07-28 08:00,2015-08-08 16:00,,2015-05-13 08:00,2015-05-26 16:00,2015-05-13 08:00,2015-05-26 16:00,2015-05-13 08:00,2015-05-26 16:00,2015-07-28 08:00,2015-08-08 16:00,,PT_Normal,,,,,4siUs6ge8EiqobWnval+wQ,bsoA6HxDWUuu9rn+rJn2ew,,,N,0,0,,,2014-04-05 12:27,2014-04-05 13:21,admin,admin,
491,140234,1749,36186,642,0,N,N,N,CP_Drtn,TT_Task,DT_FixedDUR2,TK_NotStart,BL3-MEP-EL-2F-2020,Power Points Wiring,,584,56,96,0,192,192,96,2906.213289,0,2906.213289,,,,2015-07-28 08:00,2015-08-08 16:00,,2015-05-13 08:00,2015-05-26 16:00,2015-05-13 08:00,2015-05-26 16:00,2015-05-13 08:00,2015-05-26 16:00,2015-07-28 08:00,2015-08-08 16:00,,PT_Normal,,,,,AEDZ3Rew3Uy8nxj3gplfEw,Vvk3yL2LjUGMdhhqIdqFAg,,,N,0,0,,,2014-04-05 12:27,2014-04-05 13:21,admin,admin,
492,140235,1749,36186,642,0,N,N,N,CP_Drtn,TT_Task,DT_FixedDUR2,TK_NotStart,BL3-MEP-EL-2F-2030,Cable Tray and Trunking Installation,,584,40,112,0,336,336,112,9078.448617,0,9078.448617,,,,2015-07-26 08:00,2015-08-08 16:00,,2015-05-11 08:00,2015-05-26 16:00,2015-05-11 08:00,2015-05-26 16:00,2015-05-11 08:00,2015-05-26 16:00,2015-07-26 08:00,2015-08-08 16:00,,PT_Normal,,,,,1WqoS5TxO0GPRgyk/qeR7A,s6lcmgPoe0GksOLKdVoq9w,,,N,0,0,,,2014-04-05 12:27,2014-04-05 13:21,admin,admin,
493,140236,1749,36186,642,0,N,N,N,CP_Drtn,TT_Task,DT_FixedDUR2,TK_NotStart,BL3-MEP-EL-2F-2040,Emergency Light Wiring,,584,88,64,0,128,128,64,1210.028798,0,1210.028798,,,,2015-08-01 08:00,2015-08-08 16:00,,2015-05-18 08:00,2015-05-26 16:00,2015-05-18 08:00,2015-05-26 16:00,2015-05-18 08:00,2015-05-26 16:00,2015-08-01 08:00,2015-08-08 16:00,,PT_Normal,,,,,QSp/WCS2QE6uGTyaLddXJQ,lAToDtS4O0q5bs0DwLgrEA,,,N,0,0,,,2014-04-05 12:27,2014-04-05 13:21,admin,admin,
494,140237,1749,36186,642,0,N,N,N,CP_Drtn,TT_Task,DT_FixedDUR2,TK_NotStart,BL3-MEP-EL-2F-2050,Fire Alarm System Wiring,,584,56,96,0,192,192,96,7123.009694,0,7123.009694,,,,2015-07-28 08:00,2015-08-08 16:00,,2015-05-13 08:00,2015-05-26 16:00,2015-05-13 08:00,2015-05-26 16:00,2015-05-13 08:00,2015-05-26 16:00,2015-07-28 08:00,2015-08-08 16:00,,PT_Normal,,,,,OZpQ1psPSUm+VOzhHfYegw,KIyBpqoDeEaGua4K7ItSIw,,,N,0,0,,,2014-04-05 12:27,2014-04-05 13:21,admin,admin,
495,140238,1749,36186,642,0,N,N,N,CP_Drtn,TT_Task,DT_FixedDUR2,TK_NotStart,BL3-MEP-EL-2F-2070,DB's Installation and Termination,4455,408,8,96,0,288,288,96,4982.925025,0,4982.925025,,,,2015-07-28 08:00,2015-08-08 16:00,,2015-06-07 08:00,2015-06-18 16:00,2015-06-07 08:00,2015-06-18 16:00,2015-06-07 08:00,2015-06-18 16:00,2015-07-28 08:00,2015-08-08 16:00,,PT_Normal,,,,,0eo9z+B280G4+dGgJFCtow,OSNAR5m0IUasAEIoPcYygA,,,N,0,0,,,2014-04-05 12:27,2014-04-05 13:21,admin,admin,
496,140239,1749,36186,642,0,N,N,N,CP_Drtn,TT_Task,DT_FixedDUR2,TK_NotStart,BL3-MEP-EL-2F-2000,Low Current  System Wiring,4455,1768,320,112,0,244,244,112,38231.783306,0,38231.783306,,,,2015-12-21 08:00,2016-01-03 16:00,,2015-05-11 08:00,2015-05-26 16:00,2015-05-11 08:00,2015-05-26 16:00,2015-05-11 08:00,2015-05-26 16:00,2015-12-21 08:00,2016-01-03 16:00,,PT_Normal,,,,,zFUIClztkkeYH2nF2r/66Q,1ec1daCaYUeEZzC/kuHzyQ,,,N,0,0,,,2014-04-05 12:27,2014-04-05 13:21,admin,admin,
497,140240,1749,36106,642,0,N,N,N,CP_Drtn,TT_Task,DT_FixedDUR2,TK_NotStart,BL3-MEP-EL-2F-1000,PVC Back Boxes and Conduits  Fixing in Wall,,56,0,176,0,384,384,176,3329.67233,0,3329.67233,,,,2015-04-18 08:00,2015-05-12 16:00,,2015-04-09 08:00,2015-05-04 16:00,2015-04-09 08:00,2015-05-04 16:00,2015-04-09 08:00,2015-05-04 16:00,2015-04-18 08:00,2015-05-12 16:00,,PT_Normal,,,,,f672eNl9Y02LetFayFDMDw,E01k4NyPhEiGrTaSnElbNA,,,N,0,0,,,2014-04-05 12:27,2014-04-05 13:21,admin,admin,
498,140241,1749,36106,642,0,N,N,N,CP_Drtn,TT_Task,DT_FixedDUR2,TK_NotStart,BL3-MEP-EL-2F-1010,DB's Inclosure Fixing,4455,240,112,48,0,96,96,48,2136.399392,0,2136.399392,,,,2015-05-30 08:00,2015-06-04 16:00,,2015-04-25 08:00,2015-04-30 16:00,2015-04-25 08:00,2015-04-30 16:00,2015-04-25 08:00,2015-04-30 16:00,2015-05-30 08:00,2015-06-04 16:00,,PT_Normal,,,,,S/fNp7v0y06qxFcmwx5biA,sO0a5iiVf0WfH9snNagJZg,,,N,0,0,,,2014-04-05 12:27,2014-04-05 13:21,admin,admin,
499,140242,1749,36188,642,0,N,N,N,CP_Drtn,TT_Task,DT_FixedDUR2,TK_NotStart,BL3-MEP-EL-2F-3000,Lights Fitting Fixing,,664,32,112,0,244,244,112,7336.659378,0,7336.659378,,,,2015-09-29 08:00,2015-10-12 16:00,,2015-07-08 08:00,2015-07-21 16:00,2015-07-08 08:00,2015-07-21 16:00,2015-07-08 08:00,2015-07-21 16:00,2015-09-29 08:00,2015-10-12 16:00,,PT_Normal,,,,,boV9jqyqNE29ncuJh86R0w,r/DEzjWrFk6EpGB5FKOR8Q,,,N,0,0,,,2014-04-05 12:27,2014-04-05 13:21,admin,admin,
500,140243,1749,36188,642,0,N,N,N,CP_Drtn,TT_Task,DT_FixedDUR2,TK_NotStart,BL3-MEP-EL-2F-3050,Sockets and Switches Fixing,,1152,88,64,0,128,128,64,1174.957134,0,1174.957134,,,,2015-11-28 08:00,2015-12-05 16:00,,2015-07-07 08:00,2015-07-14 16:00,2015-07-07 08:00,2015-07-14 16:00,2015-07-07 08:00,2015-07-14 16:00,2015-11-28 08:00,2015-12-05 16:00,,PT_Normal,,,,,+FctN+h/fUqt7hlbuH2z3Q,FcbpRn6lwUmP+1q9Mln+4A,,,N,0,0,,,2014-04-05 12:27,2014-04-05 13:21,admin,admin,
501,140244,1749,36188,642,0,N,N,N,CP_Drtn,TT_Task,DT_FixedDUR2,TK_NotStart,BL3-MEP-EL-2F-3010,Emergency Light Fixing,,1192,88,64,0,128,128,64,5722.024623,0,5722.024623,,,,2015-12-03 08:00,2015-12-10 16:00,,2015-07-07 08:00,2015-07-14 16:00,2015-07-07 08:00,2015-07-14 16:00,2015-07-07 08:00,2015-07-14 16:00,2015-12-03 08:00,2015-12-10 16:00,,PT_Normal,,,,,735fvzJCHkGAp4iweYV15g,AmRlWqRymEmzpnoeV3e95Q,,,N,0,0,,,2014-04-05 12:27,2014-04-05 13:21,admin,admin,
502,140245,1749,36188,642,0,N,N,N,CP_Drtn,TT_Task,DT_FixedDUR2,TK_NotStart,BL3-MEP-EL-2F-3020,Fire Alarm System Detector Installation,,832,56,96,0,192,192,96,4046.378277,0,4046.378277,,,,2015-10-19 08:00,2015-10-30 16:00,,2015-07-07 08:00,2015-07-18 16:00,2015-07-07 08:00,2015-07-18 16:00,2015-07-07 08:00,2015-07-18 16:00,2015-10-19 08:00,2015-10-30 16:00,,PT_Normal,,,,,UOtRW06vAkC6Fmja3rLcmA,RBj7dqFTbUe6Fydsrjgk3A,,,N,0,0,,,2014-04-05 12:27,2014-04-05 13:21,admin,admin,
503,140246,1749,36188,642,0,N,N,N,CP_Drtn,TT_Task,DT_FixedDUR2,TK_NotStart,BL3-MEP-EL-2F-3060,SMDB's  Termination and Final Connection,,1304,104,48,0,192,192,48,2791.825001,0,2791.825001,,,,2015-12-17 08:00,2015-12-22 16:00,,2015-07-07 08:00,2015-07-12 16:00,2015-07-07 08:00,2015-07-12 16:00,2015-07-07 08:00,2015-07-12 16:00,2015-12-17 08:00,2015-12-22 16:00,,PT_Normal,,,,,ZKoh62eogUKbOgH9s8TT2Q,INB0JI2X1Euy8E+E1KG7FQ,,,N,0,0,,,2014-04-05 12:27,2014-04-05 13:21,admin,admin,
504,140247,1749,36186,642,0,N,N,N,CP_Drtn,TT_Task,DT_FixedDUR2,TK_NotStart,BL3-MEP-EL-2F-3070,Power Cable Puling,,760,24,112,0,168,168,112,6375.759893,0,6375.759893,,,,2015-09-23 08:00,2015-10-06 16:00,,2015-06-20 08:00,2015-07-03 16:00,2015-06-20 08:00,2015-07-03 16:00,2015-06-20 08:00,2015-07-03 16:00,2015-09-23 08:00,2015-10-06 16:00,,PT_Normal,,,,,xlWaC1Wm/0WUAMtI4ep94w,y23zM5OB1U2FAnYbKZP1jw,,,N,0,0,,,2014-04-05 12:27,2014-04-05 13:21,admin,admin,
505,140248,1749,36188,642,0,N,N,N,CP_Drtn,TT_Task,DT_FixedDUR2,TK_NotStart,BL3-MEP-EL-2F-3030,Despature for Low Current  System Installation,4455,1448,0,112,0,336,336,112,72752.164276,0,72752.164276,,,,2016-01-04 08:00,2016-01-17 16:00,,2015-07-07 08:00,2015-07-20 16:00,2015-07-07 08:00,2015-07-20 16:00,2015-07-07 08:00,2015-07-20 16:00,2016-01-04 08:00,2016-01-17 16:00,,PT_Normal,,,,,2TT44qW0B0+FfEof/Z9ZLg,J/6xjKKfyUGtuJVMza07Fw,,,N,0,0,,,2014-04-05 12:27,2014-04-05 13:21,admin,admin,
506,140249,1749,36188,642,0,N,N,N,CP_Drtn,TT_Task,DT_FixedDUR2,TK_NotStart,BL3-MEP-EL-2F-3040,Low Current  System Outlet installation and Connection,4455,1448,1176,80,0,80,80,80,3870.787498,0,3870.787498,,,,2016-01-18 08:00,2016-01-27 16:00,,2015-07-21 08:00,2015-07-30 16:00,2015-07-21 08:00,2015-07-30 16:00,2015-07-21 08:00,2015-07-30 16:00,2016-01-18 08:00,2016-01-27 16:00,,PT_Normal,,,,,zGcSqkLfwU+DZkzFOGTGvQ,lzooTXLbaUuBvq5DNXrUrA,,,N,0,0,,,2014-04-05 12:27,2014-04-05 13:21,admin,admin,
507,140250,1749,36345,642,0,N,N,N,CP_Drtn,TT_Task,DT_FixedDUR2,TK_NotStart,BL3-MEP-AC-4F-1000,Supports and Hungers Fixing,,128,24,96,0,192,192,96,338.467259,0,338.467259,,,,2015-06-22 08:00,2015-07-03 16:00,,2015-06-06 08:00,2015-06-17 16:00,2015-06-06 08:00,2015-06-17 16:00,2015-06-06 08:00,2015-06-17 16:00,2015-06-22 08:00,2015-07-03 16:00,,PT_Normal,,,,,NLTYcuAewk2JwR5qyEUHzQ,kkFo2hx4XUWH6mwkYe8Ozg,,,N,0,0,,,2014-04-05 12:27,2014-04-05 13:21,admin,admin,
508,140251,1749,36515,642,0,N,N,N,CP_Drtn,TT_Task,DT_FixedDUR2,TK_NotStart,BL3-MEP-AC-4F-3000,Grills and Diffusers Fixing,,792,104,96,0,384,384,96,11550.608192,0,11550.608192,,,,2015-11-21 08:00,2015-12-02 16:00,,2015-08-14 08:00,2015-08-25 16:00,2015-08-14 08:00,2015-08-25 16:00,2015-08-14 08:00,2015-08-25 16:00,2015-11-21 08:00,2015-12-02 16:00,,PT_Normal,,,,,+Tn6XNewQUmLUQdO4IphYg,43J5b+ktuEyED/Fvij2Apw,,,N,0,0,,,2014-04-05 12:27,2014-04-05 13:21,admin,admin,
509,140252,1749,36408,642,0,N,N,N,CP_Drtn,TT_Task,DT_FixedDUR2,TK_NotStart,BL3-MEP-FF-4F-3000,Fire Extinguisher Installation,,208,32,16,0,8,8,16,1076.993507,0,1076.993507,,,,2016-01-27 08:00,2016-01-28 16:00,,2016-01-01 08:00,2016-01-02 16:00,2016-01-01 08:00,2016-01-02 16:00,2016-01-01 08:00,2016-01-02 16:00,2016-01-27 08:00,2016-01-28 16:00,,PT_Normal,,,,,waia0S6CCU+C+XvR9zBzmw,W5TmhQuf9EyvE9uCD5+d4Q,,,N,0,0,,,2014-04-05 12:27,2014-04-05 13:21,admin,admin,
510,140253,1749,36408,642,0,N,N,N,CP_Drtn,TT_Task,DT_FixedDUR2,TK_NotStart,BL3-MEP-FF-4F-3010,Hose reel Cabinet Installation and Connection,,48,0,48,0,192,192,48,1336.852298,0,1336.852298,,,,2016-01-06 08:00,2016-01-11 16:00,,2015-12-31 08:00,2016-01-05 16:00,2015-12-31 08:00,2016-01-05 16:00,2015-12-31 08:00,2016-01-05 16:00,2016-01-06 08:00,2016-01-11 16:00,,PT_Normal,,,,,incIjfNQbkeqZOPam30RKg,ZR/0N8V5bkqpS+I4D/B57Q,,,N,0,0,,,2014-04-05 12:27,2014-04-05 13:21,admin,admin,
511,140254,1749,36319,642,0,N,N,N,CP_Drtn,TT_Task,DT_FixedDUR2,TK_NotStart,BL3-MEP-PL-4F-3000,Sanitary Ware Installation Including Connection,,288,0,112,0,383.862,383.862,112,4453.516455,0,4453.516455,,,,2015-10-19 08:00,2015-11-01 16:00,,2015-09-13 08:00,2015-09-26 16:00,2015-09-13 08:00,2015-09-26 16:00,2015-09-13 08:00,2015-09-26 16:00,2015-10-19 08:00,2015-11-01 16:00,,PT_Normal,,,,,fSn9TD4qlkqka2Vkk5HXKg,6Upek8J87Ee+1S9a7vaN2Q,,,N,0,0,,,2014-04-05 12:27,2014-04-05 13:21,admin,admin,
512,140255,1749,36319,642,0,N,N,N,CP_Drtn,TT_Task,DT_FixedDUR2,TK_NotStart,BL3-MEP-PL-4F-3010,Sanitary Ware Accessories Installation,,672,152,48,0,36.45,36.45,48,166.215378,0,166.215378,,,,2015-12-20 08:00,2015-12-25 16:00,,2015-09-27 08:00,2015-10-02 16:00,2015-09-27 08:00,2015-10-02 16:00,2015-09-27 08:00,2015-10-02 16:00,2015-12-20 08:00,2015-12-25 16:00,,PT_Normal,,,,,UvdcYxUiu0uyIlqG+N95oQ,D+AYMDq3LUC6TJWuHY/KIQ,,,N,0,0,,,2014-04-05 12:27,2014-04-05 13:21,admin,admin,
513,140256,1749,36411,642,0,N,N,N,CP_Drtn,TT_Task,DT_FixedDUR2,TK_NotStart,BL3-MEP-PL-4F-1000,Low Level Water Supply Pipes Installation,,200,24,96,0,42,42,96,725.216846,0,725.216846,,,,2015-07-01 08:00,2015-07-12 16:00,,2015-06-06 08:00,2015-06-17 16:00,2015-06-06 08:00,2015-06-17 16:00,2015-06-06 08:00,2015-06-17 16:00,2015-07-01 08:00,2015-07-12 16:00,,PT_Normal,,,,,GruBDSbz2US417yKUYYVVg,UmAuwGU6OE6x/w8Luyzlwg,,,N,0,0,,,2014-04-05 12:27,2014-04-05 13:21,admin,admin,
514,140257,1749,36411,642,0,N,N,N,CP_Drtn,TT_Task,DT_FixedDUR2,TK_NotStart,BL3-MEP-PL-4F-1010,Low Level Drainage Pipes Installation,,200,24,96,0,12.67,12.67,96,2291.461713,0,2291.461713,,,,2015-07-01 08:00,2015-07-12 16:00,,2015-06-06 08:00,2015-06-17 16:00,2015-06-06 08:00,2015-06-17 16:00,2015-06-06 08:00,2015-06-17 16:00,2015-07-01 08:00,2015-07-12 16:00,,PT_Normal,,,,,+zFDl8K9LkOLsTlLJ/lgDQ,cYR2kLaerkqd4JFVh+LVMQ,,,N,0,0,,,2014-04-05 12:27,2014-04-05 13:21,admin,admin,
515,140258,1749,36411,642,0,N,N,N,CP_Drtn,TT_Task,DT_FixedDUR2,TK_NotStart,BL3-MEP-PL-4F-1020,Supports  installation for High level Pipes,,200,24,96,0,16.352,16.352,96,831.682549,0,831.682549,,,,2015-07-01 08:00,2015-07-12 16:00,,2015-06-06 08:00,2015-06-17 16:00,2015-06-06 08:00,2015-06-17 16:00,2015-06-06 08:00,2015-06-17 16:00,2015-07-01 08:00,2015-07-12 16:00,,PT_Normal,,,,,bL4c0bdlXUKb9oD32EDvBg,LjLx3/fF6EqgstzwXaZ06Q,,,N,0,0,,,2014-04-05 12:27,2014-04-05 13:21,admin,admin,
516,140259,1749,36272,642,0,N,N,N,CP_Drtn,TT_Task,DT_FixedDUR2,TK_NotStart,BL3-MEP-EL-B2-1000,PVC Back Boxes and Conduits  Fixing in Wall,,328,80,192,0,384,384,192,3331.67233,0,3331.67233,,,,2015-01-14 08:00,2015-02-10 16:00,,2014-11-25 08:00,2014-12-22 16:00,2014-11-25 08:00,2014-12-22 16:00,2014-11-25 08:00,2014-12-22 16:00,2015-01-14 08:00,2015-02-10 16:00,,PT_Normal,,,,,px2/ZTY2I02r1mq3NhVpVg,m+hH6hdj3EKHOgvHM8s7iA,,,N,0,0,,,2014-04-05 12:27,2014-04-05 13:21,admin,admin,
517,140260,1749,36272,642,0,N,N,N,CP_Drtn,TT_Task,DT_FixedDUR2,TK_NotStart,BL3-MEP-EL-B2-1010,DB's Inclosure Fixing,4455,448,112,48,0,96,96,48,2136.399392,0,2136.399392,,,,2015-02-22 08:00,2015-02-28 16:00,,2014-12-16 08:00,2014-12-22 16:00,2014-12-16 08:00,2014-12-22 16:00,2014-12-16 08:00,2014-12-22 16:00,2015-02-22 08:00,2015-02-28 16:00,,PT_Normal,,,,,Qp5g8TVg2EOL3tfKqcXb8A,TJ0Bxw/4PkKXn/Hr//HuIQ,,,N,0,0,,,2014-04-05 12:27,2014-04-05 13:21,admin,admin,
518,140261,1749,36304,642,0,N,N,N,CP_Drtn,TT_Task,DT_FixedDUR2,TK_NotStart,BL3-MEP-EL-B2-2070,SMDB's Installation,,832,192,48,0,48,48,48,4976.925025,0,4976.925025,,,,2015-06-07 08:00,2015-06-12 16:00,,2015-02-07 08:00,2015-02-12 16:00,2015-02-07 08:00,2015-02-12 16:00,2015-02-07 08:00,2015-02-12 16:00,2015-06-07 08:00,2015-06-12 16:00,,PT_Normal,,,,,OAnHx7+bTkeZabX6qSRyLQ,A73GZvyxW0uFeLOEUZXz3A,,,N,0,0,,,2014-04-05 12:27,2014-04-05 13:21,admin,admin,
519,140262,1749,36304,642,0,N,N,N,CP_Drtn,TT_Task,DT_FixedDUR2,TK_NotStart,BL3-MEP-EL-B2-2040,BMS System Wiring,,976,208,64,0,186,186,64,15191.435697,0,15191.435697,,,,2015-06-02 08:00,2015-06-09 16:00,,2015-01-11 08:00,2015-01-19 16:00,2015-01-11 08:00,2015-01-19 16:00,2015-01-11 08:00,2015-01-19 16:00,2015-06-02 08:00,2015-06-09 16:00,,PT_Normal,,,,,VwFzi8O7AkmHz5z4WSbpTQ,XhJ1EljVo0qricfHCv2bZw,,,N,0,0,,,2014-04-05 12:27,2014-04-05 13:21,admin,admin,
520,140263,1749,36304,642,0,N,N,N,CP_Drtn,TT_Task,DT_FixedDUR2,TK_NotStart,BL3-MEP-EL-B2-2020,Lighting  Wiring,,976,176,96,0,241.713,241.713,96,3578.08423,0,3578.08423,,,,2015-05-28 08:00,2015-06-09 16:00,,2015-01-06 08:00,2015-01-19 16:00,2015-01-06 08:00,2015-01-19 16:00,2015-01-06 08:00,2015-01-19 16:00,2015-05-28 08:00,2015-06-09 16:00,,PT_Normal,,,,,/GZUkn8EGU+3PUg7p+CJgA,adAgu06UuUa5ZuKDYrWKeQ,,,N,0,0,,,2014-04-05 12:27,2014-04-05 13:21,admin,admin,
521,140264,1749,36304,642,0,N,N,N,CP_Drtn,TT_Task,DT_FixedDUR2,TK_NotStart,BL3-MEP-EL-B2-2030,Power Points Wiring,,976,176,96,0,192,192,96,2906.213289,0,2906.213289,,,,2015-05-28 08:00,2015-06-09 16:00,,2015-01-06 08:00,2015-01-19 16:00,2015-01-06 08:00,2015-01-19 16:00,2015-01-06 08:00,2015-01-19 16:00,2015-05-28 08:00,2015-06-09 16:00,,PT_Normal,,,,,5/mB/8KD2UiqMFs0oa1wAg,O2XmLCugDEyAmUvzU0nxug,,,N,0,0,,,2014-04-05 12:27,2014-04-05 13:21,admin,admin,
522,140265,1749,36304,642,0,N,N,N,CP_Drtn,TT_Task,DT_FixedDUR2,TK_NotStart,BL3-MEP-EL-B2-2000,Cable Tray and Trunking Installation,,928,104,168,0,336,336,168,9085.448617,0,9085.448617,,,,2015-05-11 08:00,2015-06-03 16:00,,2014-12-24 08:00,2015-01-19 16:00,2014-12-24 08:00,2015-01-19 16:00,2014-12-24 08:00,2015-01-19 16:00,2015-05-11 08:00,2015-06-03 16:00,,PT_Normal,,,,,WGzN3SMWlkalgvrOHFMSRw,TmJ2o32wW0K7bw4fiEXMhQ,,,N,0,0,,,2014-04-05 12:27,2014-04-05 13:21,admin,admin,
523,140266,1749,36304,642,0,N,N,N,CP_Drtn,TT_Task,DT_FixedDUR2,TK_NotStart,BL3-MEP-EL-B2-2050,Emergency Light Wiring,,976,208,64,0,128,128,64,1210.028798,0,1210.028798,,,,2015-06-02 08:00,2015-06-09 16:00,,2015-01-11 08:00,2015-01-19 16:00,2015-01-11 08:00,2015-01-19 16:00,2015-01-11 08:00,2015-01-19 16:00,2015-06-02 08:00,2015-06-09 16:00,,PT_Normal,,,,,6oZa68wvykSuX9MWx2Nb3w,8L5PJBmRHEWj6wsdktWBJQ,,,N,0,0,,,2014-04-05 12:27,2014-04-05 13:21,admin,admin,
524,140267,1749,36304,642,0,N,N,N,CP_Drtn,TT_Task,DT_FixedDUR2,TK_NotStart,BL3-MEP-EL-B2-2010,Fire Alarm System Wiring,,976,176,96,0,192,192,96,7123.009694,0,7123.009694,,,,2015-05-28 08:00,2015-06-09 16:00,,2015-01-06 08:00,2015-01-19 16:00,2015-01-06 08:00,2015-01-19 16:00,2015-01-06 08:00,2015-01-19 16:00,2015-05-28 08:00,2015-06-09 16:00,,PT_Normal,,,,,l9wlCiQPmkyifPxd1jke0g,8SOGiFaDakyAil0jGbHuYQ,,,N,0,0,,,2014-04-05 12:27,2014-04-05 13:21,admin,admin,
525,140268,1749,36304,642,0,N,N,N,CP_Drtn,TT_Task,DT_FixedDUR2,TK_NotStart,BL3-MEP-EL-B2-2060,DB's Installation and Termination,4455,760,0,96,0,288,288,96,4982.925025,0,4982.925025,,,,2015-05-28 08:00,2015-06-09 16:00,,2015-02-07 08:00,2015-02-19 16:00,2015-02-07 08:00,2015-02-19 16:00,2015-02-07 08:00,2015-02-19 16:00,2015-05-28 08:00,2015-06-09 16:00,,PT_Normal,,,,,hUciK2IlCUqyD9Tf7zD//w,u3aozPiabESMFt3Yrps7QQ,,,N,0,0,,,2014-04-05 12:27,2014-04-05 13:21,admin,admin,
526,140269,1749,36125,642,0,N,N,N,CP_Drtn,TT_Task,DT_FixedDUR2,TK_NotStart,BL3-MEP-EL-B2-3020,Lights Fitting Fixing,,1056,224,112,0,244,244,112,7336.659378,0,7336.659378,,,,2015-08-04 08:00,2015-08-17 16:00,,2015-03-14 08:00,2015-03-29 16:00,2015-03-14 08:00,2015-03-29 16:00,2015-03-14 08:00,2015-03-29 16:00,2015-08-04 08:00,2015-08-17 16:00,,PT_Normal,,,,,yLqaHpUof0ax46Alp+mdUw,LOxRZoaGA0+RLm6LuySDJg,,,N,0,0,,,2014-04-05 12:27,2014-04-05 13:21,admin,admin,
527,140270,1749,36125,642,0,N,N,N,CP_Drtn,TT_Task,DT_FixedDUR2,TK_NotStart,BL3-MEP-EL-B2-3050,Sockets and Switches Fixing,,1640,184,64,0,128,128,64,1174.957134,0,1174.957134,,,,2015-10-27 08:00,2015-11-03 16:00,,2015-03-26 08:00,2015-04-04 16:00,2015-03-26 08:00,2015-04-04 16:00,2015-03-26 08:00,2015-04-04 16:00,2015-10-27 08:00,2015-11-03 16:00,,PT_Normal,,,,,ZsczNTUa20iwN2BRp5H/VA,HOqscEG5aki1r85b9zNmmA,,,N,0,0,,,2014-04-05 12:27,2014-04-05 13:21,admin,admin,
528,140271,1749,36125,642,0,N,N,N,CP_Drtn,TT_Task,DT_FixedDUR2,TK_NotStart,BL3-MEP-EL-B2-3030,Emergency Light Fixing,,1768,272,64,0,128,128,64,5722.024623,0,5722.024623,,,,2015-11-01 08:00,2015-11-08 16:00,,2015-03-14 08:00,2015-03-22 16:00,2015-03-14 08:00,2015-03-22 16:00,2015-03-14 08:00,2015-03-22 16:00,2015-11-01 08:00,2015-11-08 16:00,,PT_Normal,,,,,xFEuWU3cCUC5IYOJzRsidQ,c3ym4BK7pkKfhYP0EqyPNQ,,,N,0,0,,,2014-04-05 12:27,2014-04-05 13:21,admin,admin,
529,140272,1749,36125,642,0,N,N,N,CP_Drtn,TT_Task,DT_FixedDUR2,TK_NotStart,BL3-MEP-EL-B2-3000,CO2 System Installation,,456,0,48,0,179.65,179.65,48,21033.761938,0,21033.761938,,,,2016-01-31 08:00,2016-02-05 16:00,,2015-12-05 08:00,2015-12-10 16:00,2015-12-05 08:00,2015-12-10 16:00,2015-12-05 08:00,2015-12-10 16:00,2016-01-31 08:00,2016-02-05 16:00,,PT_Normal,,,,,qBxUPBqfz0GOqS3l/phJug,1XAnmZEnVE+yJrWxXPZBOw,,,N,0,0,,,2014-04-05 12:27,2014-04-05 13:21,admin,admin,
530,140273,1749,36125,642,0,N,N,N,CP_Drtn,TT_Task,DT_FixedDUR2,TK_NotStart,BL3-MEP-EL-B2-3010,Fire Alarm System Detector Installation,,1280,240,96,0,192,192,96,4046.378277,0,4046.378277,,,,2015-09-01 08:00,2015-09-12 16:00,,2015-03-14 08:00,2015-03-26 16:00,2015-03-14 08:00,2015-03-26 16:00,2015-03-14 08:00,2015-03-26 16:00,2015-09-01 08:00,2015-09-12 16:00,,PT_Normal,,,,,4xrOYsLV40eMvqwj66tZIg,WwxBhv2O7Uq522MjHJW7FA,,,N,0,0,,,2014-04-05 12:27,2014-04-05 13:21,admin,admin,
531,140274,1749,36125,642,0,N,N,N,CP_Drtn,TT_Task,DT_FixedDUR2,TK_NotStart,BL3-MEP-EL-B2-3060,SMDB's  Termination and Final Connection,,1896,288,48,0,192,192,48,2791.825001,0,2791.825001,,,,2015-11-17 08:00,2015-11-22 16:00,,2015-03-14 08:00,2015-03-19 16:00,2015-03-14 08:00,2015-03-19 16:00,2015-03-14 08:00,2015-03-19 16:00,2015-11-17 08:00,2015-11-22 16:00,,PT_Normal,,,,,JOE4YuPwKEmiwutbVld9+A,zbBsC0Fsm0CWP2UAF4jtTA,,,N,0,0,,,2014-04-05 12:27,2014-04-05 13:21,admin,admin,
532,140275,1749,36304,642,0,N,N,N,CP_Drtn,TT_Task,DT_FixedDUR2,TK_NotStart,BL3-MEP-EL-B2-3040,Power Cable Puling,,1152,32,112,0,168,168,112,13646.333768,0,13646.333768,,,,2015-07-29 08:00,2015-08-11 16:00,,2015-02-21 08:00,2015-03-08 16:00,2015-02-21 08:00,2015-03-08 16:00,2015-02-21 08:00,2015-03-08 16:00,2015-07-29 08:00,2015-08-11 16:00,,PT_Normal,,,,,v+RHM2KqaEuVsn897mPIzQ,/qwxwVchp0+0GX31SQ2f/A,,,N,0,0,,,2014-04-05 12:27,2014-04-05 13:21,admin,admin,
533,140276,1749,36636,642,0,N,N,N,CP_Drtn,TT_Task,DT_FixedDUR2,TK_NotStart,BL3-MEP-PL-B2-1000,Low Level Water Supply Pipes Installation,,408,8,96,0,42,42,96,725.216846,0,725.216846,,,,2015-02-09 08:00,2015-02-22 16:00,,2014-12-09 08:00,2014-12-22 16:00,2014-12-09 08:00,2014-12-22 16:00,2014-12-09 08:00,2014-12-22 16:00,2015-02-09 08:00,2015-02-22 16:00,,PT_Normal,,,,,uQopwndioU6j0Jsl3gQXWQ,UxFszTH0A0KNBWq5PJzN7A,,,N,0,0,,,2014-04-05 12:27,2014-04-05 13:21,admin,admin,
534,140277,1749,36636,642,0,N,N,N,CP_Drtn,TT_Task,DT_FixedDUR2,TK_NotStart,BL3-MEP-PL-B2-1010,Low Level Drainage Pipes Installation,,408,8,96,0,12.67,12.67,96,94.429262,0,94.429262,,,,2015-02-09 08:00,2015-02-22 16:00,,2014-12-09 08:00,2014-12-22 16:00,2014-12-09 08:00,2014-12-22 16:00,2014-12-09 08:00,2014-12-22 16:00,2015-02-09 08:00,2015-02-22 16:00,,PT_Normal,,,,,NBan6b3TxU2KxzvmHO0Cgw,CCb+enTwu0KlRYs4CiwNzw,,,N,0,0,,,2014-04-05 12:27,2014-04-05 13:21,admin,admin,
535,140278,1749,36636,642,0,N,N,N,CP_Drtn,TT_Task,DT_FixedDUR2,TK_NotStart,BL3-MEP-PL-B2-1020,Supports  installation for High level Pipes,,408,8,96,0,16.352,16.352,96,831.682549,0,831.682549,,,,2015-02-09 08:00,2015-02-22 16:00,,2014-12-09 08:00,2014-12-22 16:00,2014-12-09 08:00,2014-12-22 16:00,2014-12-09 08:00,2014-12-22 16:00,2015-02-09 08:00,2015-02-22 16:00,,PT_Normal,,,,,8AYa5x5g1EqVWzIsDEcMiw,kIRVuv+ZJ0iWHNdGeQcqTA,,,N,0,0,,,2014-04-05 12:27,2014-04-05 13:21,admin,admin,
536,140279,1749,36637,642,0,N,N,N,CP_Drtn,TT_Task,DT_FixedDUR2,TK_NotStart,BL3-MEP-PL-B2-3010,Sanitary Ware Installation Including Connection,,784,0,96,0,383.862,383.862,96,4451.516455,0,4451.516455,,,,2015-07-31 08:00,2015-08-11 16:00,,2015-04-18 08:00,2015-04-30 16:00,2015-04-18 08:00,2015-04-30 16:00,2015-04-18 08:00,2015-04-30 16:00,2015-07-31 08:00,2015-08-11 16:00,,PT_Normal,,,,,vvrUIn4R2EaKtROrn/RmJQ,c/3gMBNTkE6DcVeO9h4Pqg,,,N,0,0,,,2014-04-05 12:27,2014-04-05 13:21,admin,admin,
537,140280,1749,36637,642,0,N,N,N,CP_Drtn,TT_Task,DT_FixedDUR2,TK_NotStart,BL3-MEP-PL-B2-3020,Sanitary Ware Accessories Installation,,1536,288,48,0,36.45,36.45,48,166.215378,0,166.215378,,,,2015-11-14 08:00,2015-11-19 16:00,,2015-05-02 08:00,2015-05-07 16:00,2015-05-02 08:00,2015-05-07 16:00,2015-05-02 08:00,2015-05-07 16:00,2015-11-14 08:00,2015-11-19 16:00,,PT_Normal,,,,,HFij8BH0qEaJbkzGFXQkwg,f46dE6gl3EeLrKqXQh+O8g,,,N,0,0,,,2014-04-05 12:27,2014-04-05 13:21,admin,admin,
538,140281,1749,36638,642,0,N,N,N,CP_Drtn,TT_Task,DT_FixedDUR2,TK_NotStart,BL3-MEP-PL-B2-3000,Manhole Covers  Installation,,2752,608,48,0,37.5,37.5,48,494.574212,0,494.574212,,,,2016-01-24 08:00,2016-01-29 16:00,,2015-01-27 08:00,2015-02-02 16:00,2015-01-27 08:00,2015-02-02 16:00,2015-01-27 08:00,2015-02-02 16:00,2016-01-24 08:00,2016-01-29 16:00,,PT_Normal,,,,,Fig46DtTNkqAeYG8vjkkkA,JsM2aIwYWUW8Ij94COMIzQ,,,N,0,0,,,2014-04-05 12:27,2014-04-05 13:21,admin,admin,
539,140282,1749,36638,642,0,N,N,N,CP_Drtn,TT_Task,DT_FixedDUR2,TK_NotStart,BL3-MEP-PL-B2-2030,Parking Drain Installation,,1912,296,48,0,48,48,48,553.83323,0,553.83323,,,,2015-11-19 08:00,2015-11-24 16:00,,2015-03-14 08:00,2015-03-19 16:00,2015-03-14 08:00,2015-03-19 16:00,2015-03-14 08:00,2015-03-19 16:00,2015-11-19 08:00,2015-11-24 16:00,,PT_Normal,,,,,f7i0iNolxkuqFfWeRqsjGw,7P3ja8LSlUO+c7e0o8D17g,,,N,0,0,,,2014-04-05 12:27,2014-04-05 13:21,admin,admin,
540,140283,1749,36638,642,0,N,N,N,CP_Drtn,TT_Task,DT_FixedDUR2,TK_NotStart,BL3-MEP-PL-B2-2000,High Level Water Supply Pipes and Fittings Installation,,400,0,168,0,150.02,150.02,168,1329.597866,0,1329.597866,,,,2015-02-23 08:00,2015-03-18 16:00,,2014-12-24 08:00,2015-01-19 16:00,2014-12-24 08:00,2015-01-19 16:00,2014-12-24 08:00,2015-01-19 16:00,2015-02-23 08:00,2015-03-18 16:00,,PT_Normal,,,,,asB+9VVZEkuxZcRNg/uduw,kNdg+ZAI90yYvP8xfmoXpA,,,N,0,0,,,2014-04-05 12:27,2014-04-05 13:21,admin,admin,
541,140284,1749,36638,642,0,N,N,N,CP_Drtn,TT_Task,DT_FixedDUR2,TK_NotStart,BL3-MEP-PL-B2-2010,High Level Drainage Pipes Installation,,400,0,168,0,244.38,244.38,168,6583.525267,0,6583.525267,,,,2015-02-23 08:00,2015-03-18 16:00,,2014-12-24 08:00,2015-01-19 16:00,2014-12-24 08:00,2015-01-19 16:00,2014-12-24 08:00,2015-01-19 16:00,2015-02-23 08:00,2015-03-18 16:00,,PT_Normal,,,,,FQMAmGKzQk69QNBeRsyA4g,cgo0sysiY0e+9mZ5k90+Ng,,,N,0,0,,,2014-04-05 12:27,2014-04-05 13:21,admin,admin,
542,140285,1749,36638,642,0,N,N,N,CP_Drtn,TT_Task,DT_FixedDUR2,TK_NotStart,BL3-MEP-PL-B2-2020,Water Supply Pipes Pressure Test,4456,928,224,48,0,48,48,48,151.744312,0,151.744312,,,,2015-06-04 08:00,2015-06-09 16:00,,2015-01-20 08:00,2015-01-26 16:00,2015-01-20 08:00,2015-01-26 16:00,2015-01-20 08:00,2015-01-26 16:00,2015-06-04 08:00,2015-06-09 16:00,,PT_Normal,,,,,jtDMz7zgsESov/aKWT5qEw,YI/X3kEfm02E4ijcuygz4g,,,N,0,0,,,2014-04-05 12:27,2014-04-05 13:21,admin,admin,
543,140286,1749,36638,642,0,N,N,N,CP_Drtn,TT_Task,DT_FixedDUR2,TK_NotStart,BL3-MEP-PL-B2-2040,Drainage Pipes Gravity Test,,928,0,48,0,48,48,48,826.240719,0,826.240719,,,,2015-06-04 08:00,2015-06-09 16:00,,2015-01-20 08:00,2015-01-26 16:00,2015-01-20 08:00,2015-01-26 16:00,2015-01-20 08:00,2015-01-26 16:00,2015-06-04 08:00,2015-06-09 16:00,,PT_Normal,,,,,6xDR60nMUkKkxkvVlquhKg,dD7mpMWpz0iazzWLXhIKOg,,,N,0,0,,,2014-04-05 12:27,2014-04-05 13:21,admin,admin,
544,140287,1749,36638,642,0,N,N,N,CP_Drtn,TT_Task,DT_FixedDUR2,TK_NotStart,BL3-MEP-PL-B2-2050,Sump Pumps Installation Including Connection,,2312,2264,168,0,450,450,168,2579.277817,0,2579.277817,,,,2016-01-10 08:00,2016-01-30 16:00,,2015-03-16 08:00,2015-04-08 16:00,2015-03-16 08:00,2015-04-08 16:00,2015-03-16 08:00,2015-04-08 16:00,2016-01-10 08:00,2016-01-30 16:00,,PT_Normal,,,,,VQNG5sBn7UKjo7Rw7DhPyQ,xW9cIG4RwkK4jit1pvsmuw,,,N,0,0,,,2014-04-05 12:27,2014-04-05 13:21,admin,admin,
545,140288,1749,36640,642,0,N,N,N,CP_Drtn,TT_Task,DT_FixedDUR2,TK_NotStart,BL3-MEP-AC-B2-2000,Fresh Air Duct and Extract Duct Installation,4454,336,104,168,0,1008,1008,168,2029.377292,0,2029.377292,,,,2015-02-14 08:00,2015-03-09 16:00,,2014-12-24 08:00,2015-01-19 16:00,2014-12-24 08:00,2015-01-19 16:00,2014-12-24 08:00,2015-01-19 16:00,2015-02-14 08:00,2015-03-09 16:00,,PT_Normal,,,,,udHn4VcTA0OaRQxGq7BXug,paKtHgx8OE6aFiXY49LUvg,,,N,0,0,,,2014-04-05 12:27,2014-04-05 13:21,admin,admin,
546,140289,1749,36640,642,0,N,N,N,CP_Drtn,TT_Task,DT_FixedDUR2,TK_NotStart,BL3-MEP-AC-B2-2010,Duct Accessories Installation,4457,752,48,112,0,448,448,112,250.167804,0,250.167804,,,,2015-05-26 08:00,2015-06-09 16:00,,2015-02-05 08:00,2015-02-21 16:00,2015-02-05 08:00,2015-02-21 16:00,2015-02-05 08:00,2015-02-21 16:00,2015-05-26 08:00,2015-06-09 16:00,,PT_Normal,,,,,tHuh5WLTU0yyGXstztS+hg,JY+sYhUOLkSokzNvVnKUCg,,,N,0,0,,,2014-04-05 12:27,2014-04-05 13:21,admin,admin,
547,140290,1749,36641,642,0,N,N,N,CP_Drtn,TT_Task,DT_FixedDUR2,TK_NotStart,BL3-MEP-AC-B2-3000,Grills and Diffusers Fixing,,1056,0,80,0,320,320,80,426.81116,0,426.81116,,,,2015-09-14 08:00,2015-09-23 16:00,,2015-04-30 08:00,2015-05-11 16:00,2015-04-30 08:00,2015-05-11 16:00,2015-04-30 08:00,2015-05-11 16:00,2015-09-14 08:00,2015-09-23 16:00,,PT_Normal,,,,,BfCbeki4D0CbBDMnxtxPCg,M892uII/KkiiANBAM3CNbg,,,N,0,0,,,2014-04-05 12:27,2014-04-05 13:21,admin,admin,
548,140291,1749,36642,642,0,N,N,N,CP_Drtn,TT_Task,DT_FixedDUR2,TK_NotStart,BL3-MEP-AC-B2-1000,Supports and Hungers Fixing,,344,8,96,0,192,192,96,130.114912,0,130.114912,,,,2015-01-31 08:00,2015-02-12 16:00,,2014-12-09 08:00,2014-12-22 16:00,2014-12-09 08:00,2014-12-22 16:00,2014-12-09 08:00,2014-12-22 16:00,2015-01-31 08:00,2015-02-12 16:00,,PT_Normal,,,,,yWcNRkUjH06Rv1Nf84Pd9g,1W8cyvnSLEy0P+9y+rKJHQ,,,N,0,0,,,2014-04-05 12:27,2014-04-05 13:21,admin,admin,
549,140292,1749,36435,642,0,N,N,N,CP_Drtn,TT_Task,DT_FixedDUR2,TK_NotStart,BL3-MEP-FF-B2-1000,Supports  and Hungers installation,,696,0,192,0,288,288,192,59.857235,0,59.857235,,,,2015-04-02 08:00,2015-04-29 16:00,,2014-12-20 08:00,2015-01-18 16:00,2014-12-20 08:00,2015-01-18 16:00,2014-12-20 08:00,2015-01-18 16:00,2015-04-02 08:00,2015-04-29 16:00,,PT_Normal,,,,,vf7enN2kck+zywig+5OZPQ,jQnp0fQUS0m8yixx4AluLQ,,,N,0,0,,,2014-04-05 12:27,2014-04-05 13:21,admin,admin,
550,140293,1749,36436,642,0,N,N,N,CP_Drtn,TT_Task,DT_FixedDUR2,TK_NotStart,BL3-MEP-FF-B2-2000,Fire Fighting Pipes and Fittings Installation,,720,0,168,0,1008,1008,168,307.83721,0,307.83721,,,,2015-05-04 08:00,2015-05-27 16:00,,2015-01-19 08:00,2015-02-11 16:00,2015-01-19 08:00,2015-02-11 16:00,2015-01-19 08:00,2015-02-11 16:00,2015-05-04 08:00,2015-05-27 16:00,,PT_Normal,,,,,0Lzj8HvTk0G3Gc6zGXpAIA,FjXIXmNW9UyUbafqn9evdA,,,N,0,0,,,2014-04-05 12:27,2014-04-05 13:21,admin,admin,
551,140294,1749,36436,642,0,N,N,N,CP_Drtn,TT_Task,DT_FixedDUR2,TK_NotStart,BL3-MEP-FF-B2-2010,Fire Fighting Pipes Pressure Test,4456,768,104,48,0,96,96,48,41.857235,0,41.857235,,,,2015-06-04 08:00,2015-06-09 16:00,,2015-02-12 08:00,2015-02-18 16:00,2015-02-12 08:00,2015-02-18 16:00,2015-02-12 08:00,2015-02-18 16:00,2015-06-04 08:00,2015-06-09 16:00,,PT_Normal,,,,,RoXa13LoG0mtjE+9FdT9ZQ,E1pMPMjWEkCZM8TdC2DbSQ,,,N,0,0,,,2014-04-05 12:27,2014-04-05 13:21,admin,admin,
552,140295,1749,36546,642,0,N,N,N,CP_Drtn,TT_Task,DT_FixedDUR2,TK_NotStart,BL3-MEP-FF-B2-3000,Fire Extinguisher Installation,,400,32,16,0,8,8,16,1076.993507,0,1076.993507,,,,2016-01-15 08:00,2016-01-16 16:00,,2015-11-26 08:00,2015-11-27 16:00,2015-11-26 08:00,2015-11-27 16:00,2015-11-26 08:00,2015-11-27 16:00,2016-01-15 08:00,2016-01-16 16:00,,PT_Normal,,,,,4WGXuQa8O0GGI1MRWSbOsw,Bl5Yvu9H20S3+OZuZ/JB1A,,,N,0,0,,,2014-04-05 12:27,2014-04-05 13:21,admin,admin,
553,140296,1749,36546,642,0,N,N,N,CP_Drtn,TT_Task,DT_FixedDUR2,TK_NotStart,BL3-MEP-FF-B2-3010,Hose reel Cabinet Installation and Connection,,48,0,48,0,192,192,48,1336.852298,0,1336.852298,,,,2015-12-01 08:00,2015-12-06 16:00,,2015-11-25 08:00,2015-11-30 16:00,2015-11-25 08:00,2015-11-30 16:00,2015-11-25 08:00,2015-11-30 16:00,2015-12-01 08:00,2015-12-06 16:00,,PT_Normal,,,,,Uh8UQ3FclUSykYdA2lvX9w,By3kaeMoh0al4gg8qV/QSg,,,N,0,0,,,2014-04-05 12:27,2014-04-05 13:21,admin,admin,
554,140297,1749,36337,642,0,N,N,N,CP_Drtn,TT_Task,DT_FixedDUR2,TK_NotStart,BL3-MEP-PL-6F-3000,Sanitary Ware Installation Including Connection,,136,0,112,0,383.862,383.862,112,4453.516455,0,4453.516455,,,,2015-11-16 08:00,2015-11-29 16:00,,2015-10-30 08:00,2015-11-12 16:00,2015-10-30 08:00,2015-11-12 16:00,2015-10-30 08:00,2015-11-12 16:00,2015-11-16 08:00,2015-11-29 16:00,,PT_Normal,,,,,DKEg1JNumUSuYGdCfLiO4g,Lt5URbH0WUeUsVsEkgi06A,,,N,0,0,,,2014-04-05 12:27,2014-04-05 13:21,admin,admin,
555,140298,1749,36337,642,0,N,N,N,CP_Drtn,TT_Task,DT_FixedDUR2,TK_NotStart,BL3-MEP-PL-6F-3010,Sanitary Ware Accessories Installation,,392,120,48,0,36.45,36.45,48,166.215378,0,166.215378,,,,2016-01-01 08:00,2016-01-06 16:00,,2015-11-13 08:00,2015-11-18 16:00,2015-11-13 08:00,2015-11-18 16:00,2015-11-13 08:00,2015-11-18 16:00,2016-01-01 08:00,2016-01-06 16:00,,PT_Normal,,,,,wPMODP18oki64cNXOSH6PA,/VD5Q3yQR0iX2bc7IK/vyg,,,N,0,0,,,2014-04-05 12:27,2014-04-05 13:21,admin,admin,
556,140299,1749,36407,642,0,N,N,N,CP_Drtn,TT_Task,DT_FixedDUR2,TK_NotStart,BL3-MEP-AC-6F-3000,Grills and Diffusers Fixing,,608,72,96,0,384,384,96,11550.608192,0,11550.608192,,,,2015-12-15 08:00,2015-12-26 16:00,,2015-09-30 08:00,2015-10-11 16:00,2015-09-30 08:00,2015-10-11 16:00,2015-09-30 08:00,2015-10-11 16:00,2015-12-15 08:00,2015-12-26 16:00,,PT_Normal,,,,,4mOC/K7ypEi04rIZXMKRow,RKqSsjX4ukiZOfjFx3tlCQ,,,N,0,0,,,2014-04-05 12:27,2014-04-05 13:21,admin,admin,
557,140300,1749,36368,642,0,N,N,N,CP_Drtn,TT_Task,DT_FixedDUR2,TK_NotStart,BL3-MEP-AC-6F-1000,Supports and Hungers Fixing,,112,8,96,0,192,192,96,338.467259,0,338.467259,,,,2015-08-03 08:00,2015-08-14 16:00,,2015-07-20 08:00,2015-07-31 16:00,2015-07-20 08:00,2015-07-31 16:00,2015-07-20 08:00,2015-07-31 16:00,2015-08-03 08:00,2015-08-14 16:00,,PT_Normal,,,,,rdjozOG2nUWTTZL5XST6fg,3xuHH90hIEGGjCUqyPoqdQ,,,N,0,0,,,2014-04-05 12:27,2014-04-05 13:21,admin,admin,
558,140301,1749,36479,642,0,N,N,N,CP_Drtn,TT_Task,DT_FixedDUR2,TK_NotStart,BL3-MEP-FF-6F-3000,Fire Extinguisher Installation,,144,32,16,0,8,8,16,1076.993507,0,1076.993507,,,,2016-01-31 08:00,2016-02-01 16:00,,2016-01-13 08:00,2016-01-14 16:00,2016-01-13 08:00,2016-01-14 16:00,2016-01-13 08:00,2016-01-14 16:00,2016-01-31 08:00,2016-02-01 16:00,,PT_Normal,,,,,oTFUb19pAkmZ2+ZAIuHdZQ,xquP8aWhk0mM1NMwoHz5GA,,,N,0,0,,,2014-04-05 12:27,2014-04-05 13:21,admin,admin,
559,140302,1749,36479,642,0,N,N,N,CP_Drtn,TT_Task,DT_FixedDUR2,TK_NotStart,BL3-MEP-FF-6F-3010,Hose reel Cabinet Installation and Connection,,48,0,48,0,192,192,48,1336.852298,0,1336.852298,,,,2016-01-18 08:00,2016-01-23 16:00,,2016-01-12 08:00,2016-01-17 16:00,2016-01-12 08:00,2016-01-17 16:00,2016-01-12 08:00,2016-01-17 16:00,2016-01-18 08:00,2016-01-23 16:00,,PT_Normal,,,,,9v0h9Mf/Jk6mgmG4lDgNbg,SHfdnCOF1EuHJpvrxw+FUw,,,N,0,0,,,2014-04-05 12:27,2014-04-05 13:21,admin,admin,
560,140303,1749,36172,642,0,N,N,N,CP_Drtn,TT_Task,DT_FixedDUR2,TK_NotStart,BL3-MEP-EL-GF-2060,SMDB's  Installation,,1640,88,48,0,45,45,48,4202.598932,0,4202.598932,,,,2015-11-29 08:00,2015-12-04 16:00,,2015-05-04 08:00,2015-05-10 16:00,2015-05-04 08:00,2015-05-10 16:00,2015-05-04 08:00,2015-05-10 16:00,2015-11-29 08:00,2015-12-04 16:00,,PT_Normal,,,,,7X84PzO8YkKTWU3znl/PNg,hbXSUlx/5UiF5jrk9b9UVw,,,N,0,0,,,2014-04-05 12:27,2014-04-05 13:21,admin,admin,
561,140304,1749,36172,642,0,N,N,N,CP_Drtn,TT_Task,DT_FixedDUR2,TK_NotStart,BL3-MEP-EL-GF-2000,Lighting  Wiring,,664,80,96,0,241.713,241.713,96,3578.08423,0,3578.08423,,,,2015-06-28 08:00,2015-07-09 16:00,,2015-03-28 08:00,2015-04-09 16:00,2015-03-28 08:00,2015-04-09 16:00,2015-03-28 08:00,2015-04-09 16:00,2015-06-28 08:00,2015-07-09 16:00,,PT_Normal,,,,,t5Ym0vX23keDgLmCb9yRAQ,RuTmWcs7K06EkKZfytKCXw,,,N,0,0,,,2014-04-05 12:27,2014-04-05 13:21,admin,admin,
562,140305,1749,36172,642,0,N,N,N,CP_Drtn,TT_Task,DT_FixedDUR2,TK_NotStart,BL3-MEP-EL-GF-2010,Power Points Wiring,,664,80,96,0,192,192,96,2906.213289,0,2906.213289,,,,2015-06-28 08:00,2015-07-09 16:00,,2015-03-28 08:00,2015-04-09 16:00,2015-03-28 08:00,2015-04-09 16:00,2015-03-28 08:00,2015-04-09 16:00,2015-06-28 08:00,2015-07-09 16:00,,PT_Normal,,,,,dwgNsv2gSkm2EUWKdx+cCw,pQ8J7SXr70O+trfvet2zQw,,,N,0,0,,,2014-04-05 12:27,2014-04-05 13:21,admin,admin,
563,140306,1749,36172,642,0,N,N,N,CP_Drtn,TT_Task,DT_FixedDUR2,TK_NotStart,BL3-MEP-EL-GF-2020,Cable Tray and Trunking Installation,,664,64,112,0,336,336,112,9078.448617,0,9078.448617,,,,2015-06-26 08:00,2015-07-09 16:00,,2015-03-25 08:00,2015-04-09 16:00,2015-03-25 08:00,2015-04-09 16:00,2015-03-25 08:00,2015-04-09 16:00,2015-06-26 08:00,2015-07-09 16:00,,PT_Normal,,,,,Ax50FZ0dsEuozjy6PqyKNA,86c5avQuLUWydocZF3jHVg,,,N,0,0,,,2014-04-05 12:27,2014-04-05 13:21,admin,admin,
564,140307,1749,36172,642,0,N,N,N,CP_Drtn,TT_Task,DT_FixedDUR2,TK_NotStart,BL3-MEP-EL-GF-2030,Emergency Light Wiring,,664,112,64,0,128,128,64,1210.028798,0,1210.028798,,,,2015-07-02 08:00,2015-07-09 16:00,,2015-04-01 08:00,2015-04-09 16:00,2015-04-01 08:00,2015-04-09 16:00,2015-04-01 08:00,2015-04-09 16:00,2015-07-02 08:00,2015-07-09 16:00,,PT_Normal,,,,,favIeeaz2EORsZzo4vDCjA,kU+Jr1+mzU2+YbgwM8VUVQ,,,N,0,0,,,2014-04-05 12:27,2014-04-05 13:21,admin,admin,
565,140308,1749,36172,642,0,N,N,N,CP_Drtn,TT_Task,DT_FixedDUR2,TK_NotStart,BL3-MEP-EL-GF-2040,Fire Alarm System Wiring,,664,80,96,0,192,192,96,7123.009694,0,7123.009694,,,,2015-06-28 08:00,2015-07-09 16:00,,2015-03-28 08:00,2015-04-09 16:00,2015-03-28 08:00,2015-04-09 16:00,2015-03-28 08:00,2015-04-09 16:00,2015-06-28 08:00,2015-07-09 16:00,,PT_Normal,,,,,4fG9AxRVDUqglpCkHs8QiA,eTsemfVhVkilqGcesqhtwg,,,N,0,0,,,2014-04-05 12:27,2014-04-05 13:21,admin,admin,
566,140309,1749,36172,642,0,N,N,N,CP_Drtn,TT_Task,DT_FixedDUR2,TK_NotStart,BL3-MEP-EL-GF-2070,DB's Installation and Termination,4455,408,0,96,0,288,288,96,4982.925025,0,4982.925025,,,,2015-06-28 08:00,2015-07-09 16:00,,2015-05-04 08:00,2015-05-17 16:00,2015-05-04 08:00,2015-05-17 16:00,2015-05-04 08:00,2015-05-17 16:00,2015-06-28 08:00,2015-07-09 16:00,,PT_Normal,,,,,Yw2Ya7GNj0WEbE8wqO7JZw,IlDxfqo7qk6L3DWIuMs3Zg,,,N,0,0,,,2014-04-05 12:27,2014-04-05 13:21,admin,admin,
567,140310,1749,36172,642,0,N,N,N,CP_Drtn,TT_Task,DT_FixedDUR2,TK_NotStart,BL3-MEP-EL-GF-2050,Low Current  System Wiring,4455,2056,400,112,0,244,244,112,38231.783306,0,38231.783306,,,,2015-12-17 08:00,2015-12-30 16:00,,2015-03-25 08:00,2015-04-09 16:00,2015-03-25 08:00,2015-04-09 16:00,2015-03-25 08:00,2015-04-09 16:00,2015-12-17 08:00,2015-12-30 16:00,,PT_Normal,,,,,9Bs58tb9PkyrUGYN3nyEYw,2dPHqQz3D0a1A8XOuLln0g,,,N,0,0,,,2014-04-05 12:27,2014-04-05 13:21,admin,admin,
568,140311,1749,36068,642,0,N,N,N,CP_Drtn,TT_Task,DT_FixedDUR2,TK_NotStart,BL3-MEP-EL-GF-3010,Lights Fitting Fixing,,688,24,112,0,244,244,112,7336.659378,0,7336.659378,,,,2015-09-01 08:00,2015-09-14 16:00,,2015-06-07 08:00,2015-06-20 16:00,2015-06-07 08:00,2015-06-20 16:00,2015-06-07 08:00,2015-06-20 16:00,2015-09-01 08:00,2015-09-14 16:00,,PT_Normal,,,,,xJTY8lrtDUWz9u4yr1epQQ,womfx72YXkyn8JXzG+0T5Q,,,N,0,0,,,2014-04-05 12:27,2014-04-05 13:21,admin,admin,
569,140312,1749,36068,642,0,N,N,N,CP_Drtn,TT_Task,DT_FixedDUR2,TK_NotStart,BL3-MEP-EL-GF-3060,Sockets and Switches Fixing,,1264,72,64,0,128,128,64,1174.957134,0,1174.957134,,,,2015-11-12 08:00,2015-11-19 16:00,,2015-06-07 08:00,2015-06-14 16:00,2015-06-07 08:00,2015-06-14 16:00,2015-06-07 08:00,2015-06-14 16:00,2015-11-12 08:00,2015-11-19 16:00,,PT_Normal,,,,,WjQKV1q5sUqMk7Ie/PL6og,f5MBYv+8QU2zHh7X1DQFvQ,,,N,0,0,,,2014-04-05 12:27,2014-04-05 13:21,admin,admin,
570,140313,1749,36068,642,0,N,N,N,CP_Drtn,TT_Task,DT_FixedDUR2,TK_NotStart,BL3-MEP-EL-GF-3020,Emergency Light Fixing,,1304,72,64,0,128,128,64,5722.024623,0,5722.024623,,,,2015-11-17 08:00,2015-11-24 16:00,,2015-06-07 08:00,2015-06-14 16:00,2015-06-07 08:00,2015-06-14 16:00,2015-06-07 08:00,2015-06-14 16:00,2015-11-17 08:00,2015-11-24 16:00,,PT_Normal,,,,,OjWGePBuAkeMpTYcaDvtFQ,Zfyiy9LsDESvHWfTSjF7OQ,,,N,0,0,,,2014-04-05 12:27,2014-04-05 13:21,admin,admin,
571,140314,1749,36068,642,0,N,N,N,CP_Drtn,TT_Task,DT_FixedDUR2,TK_NotStart,BL3-MEP-EL-GF-3030,Fire Alarm System Detector Installation,,880,40,96,0,192,192,96,4046.378277,0,4046.378277,,,,2015-09-25 08:00,2015-10-06 16:00,,2015-06-07 08:00,2015-06-18 16:00,2015-06-07 08:00,2015-06-18 16:00,2015-06-07 08:00,2015-06-18 16:00,2015-09-25 08:00,2015-10-06 16:00,,PT_Normal,,,,,QRc+HqN2iEes/b2c7NvT1g,QsOP/3EKnkGa8G4+TNQ2Rw,,,N,0,0,,,2014-04-05 12:27,2014-04-05 13:21,admin,admin,
572,140315,1749,36068,642,0,N,N,N,CP_Drtn,TT_Task,DT_FixedDUR2,TK_NotStart,BL3-MEP-EL-GF-3070,SMDB's  Termination and Final Connection,,1448,88,48,0,192,192,48,2791.825001,0,2791.825001,,,,2015-12-05 08:00,2015-12-10 16:00,,2015-06-07 08:00,2015-06-12 16:00,2015-06-07 08:00,2015-06-12 16:00,2015-06-07 08:00,2015-06-12 16:00,2015-12-05 08:00,2015-12-10 16:00,,PT_Normal,,,,,NmFmVaSi80Gtk1YarJSo5A,jvk3+SQ0W0Spa2Fh4z5wEw,,,N,0,0,,,2014-04-05 12:27,2014-04-05 13:21,admin,admin,
573,140316,1749,36172,642,0,N,N,N,CP_Drtn,TT_Task,DT_FixedDUR2,TK_NotStart,BL3-MEP-EL-GF-3000,Power Cable Puling,,784,24,112,0,168,168,112,6375.759893,0,6375.759893,,,,2015-08-26 08:00,2015-09-08 16:00,,2015-05-18 08:00,2015-06-02 16:00,2015-05-18 08:00,2015-06-02 16:00,2015-05-18 08:00,2015-06-02 16:00,2015-08-26 08:00,2015-09-08 16:00,,PT_Normal,,,,,hbQDP2rBxUSoOTuFrVKUCA,PXXWyoijPEyxtvKb/BTv3A,,,N,0,0,,,2014-04-05 12:27,2014-04-05 13:21,admin,admin,
574,140317,1749,36068,642,0,N,N,N,CP_Drtn,TT_Task,DT_FixedDUR2,TK_NotStart,BL3-MEP-EL-GF-3040,Despature for Low Current  System Installation,4455,1656,0,112,0,336,336,112,72752.164276,0,72752.164276,,,,2015-12-31 08:00,2016-01-13 16:00,,2015-06-07 08:00,2015-06-20 16:00,2015-06-07 08:00,2015-06-20 16:00,2015-06-07 08:00,2015-06-20 16:00,2015-12-31 08:00,2016-01-13 16:00,,PT_Normal,,,,,kbTHLh6oikSWt++zfKmi/g,WWJuP5biZ0ua0wLRDkkkYA,,,N,0,0,,,2014-04-05 12:27,2014-04-05 13:21,admin,admin,
575,140318,1749,36068,642,0,N,N,N,CP_Drtn,TT_Task,DT_FixedDUR2,TK_NotStart,BL3-MEP-EL-GF-3050,Low Current  System Outlet installation and Connection,4455,1656,1320,80,0,80,80,80,3870.787498,0,3870.787498,,,,2016-01-14 08:00,2016-01-23 16:00,,2015-06-21 08:00,2015-06-30 16:00,2015-06-21 08:00,2015-06-30 16:00,2015-06-21 08:00,2015-06-30 16:00,2016-01-14 08:00,2016-01-23 16:00,,PT_Normal,,,,,4xFMKCK4QU28bEs0k1PA0A,vl9RAo0SUkabp+8bRXEvhg,,,N,0,0,,,2014-04-05 12:27,2014-04-05 13:21,admin,admin,
576,140319,1749,36165,642,0,N,N,N,CP_Drtn,TT_Task,DT_FixedDUR2,TK_NotStart,BL3-MEP-EL-GF-1000,PVC Back Boxes and Conduits  Fixing in Wall,,56,0,176,0,384,384,176,3329.67233,0,3329.67233,,,,2015-02-25 08:00,2015-03-22 16:00,,2015-02-17 08:00,2015-03-14 16:00,2015-02-17 08:00,2015-03-14 16:00,2015-02-17 08:00,2015-03-14 16:00,2015-02-25 08:00,2015-03-22 16:00,,PT_Normal,,,,,lc0TtF+SPE6rnnCxd6Noew,Es2UAiKqTEiJKkO6QIjlqw,,,N,0,0,,,2014-04-05 12:27,2014-04-05 13:21,admin,admin,
577,140320,1749,36165,642,0,N,N,N,CP_Drtn,TT_Task,DT_FixedDUR2,TK_NotStart,BL3-MEP-EL-GF-1010,DB's Inclosure Fixing,4455,232,120,48,0,96,96,48,2136.399392,0,2136.399392,,,,2015-04-11 08:00,2015-04-16 16:00,,2015-03-08 08:00,2015-03-14 16:00,2015-03-08 08:00,2015-03-14 16:00,2015-03-08 08:00,2015-03-14 16:00,2015-04-11 08:00,2015-04-16 16:00,,PT_Normal,,,,,Ofb/p3Fi2kCbzrD5t2txjg,ZQf1CjbbmEKjMVluZCc/sw,,,N,0,0,,,2014-04-05 12:27,2014-04-05 13:21,admin,admin,
578,140321,1749,36486,642,0,N,N,N,CP_Drtn,TT_Task,DT_FixedDUR2,TK_NotStart,BL3-MEP-AC-GF-2000,Fresh Air Duct and Extract Duct Installation and Insulation,4454,120,0,168,0,1008,1008,168,5570.653981,0,5570.653981,,,,2015-04-04 08:00,2015-04-27 16:00,,2015-03-17 08:00,2015-04-09 16:00,2015-03-17 08:00,2015-04-09 16:00,2015-03-17 08:00,2015-04-09 16:00,2015-04-04 08:00,2015-04-27 16:00,,PT_Normal,,,,,uU/AivzZaE+BfScz3IydiA,NTBY/j5LvESkMtlLX5nyDg,,,N,0,0,,,2014-04-05 12:27,2014-04-05 13:21,admin,admin,
579,140322,1749,36486,642,0,N,N,N,CP_Drtn,TT_Task,DT_FixedDUR2,TK_NotStart,BL3-MEP-AC-GF-2030,Duct Accessories Installation,4457,552,64,112,0,448,448,112,666.965527,0,666.965527,,,,2015-06-26 08:00,2015-07-09 16:00,,2015-04-11 08:00,2015-04-26 16:00,2015-04-11 08:00,2015-04-26 16:00,2015-04-11 08:00,2015-04-26 16:00,2015-06-26 08:00,2015-07-09 16:00,,PT_Normal,,,,,NPBFMzxk3EKe6mSE8M2bsA,qN3nfbPSjEK3OhvxXKio2g,,,N,0,0,,,2014-04-05 12:27,2014-04-05 13:21,admin,admin,
580,140323,1749,36486,642,0,N,N,N,CP_Drtn,TT_Task,DT_FixedDUR2,TK_NotStart,BL3-MEP-AC-GF-2010,FCU's Installation,4457,592,48,64,0,192,192,64,6000.055155,0,6000.055155,,,,2015-06-23 08:00,2015-06-30 16:00,,2015-04-01 08:00,2015-04-09 16:00,2015-04-01 08:00,2015-04-09 16:00,2015-04-01 08:00,2015-04-09 16:00,2015-06-23 08:00,2015-06-30 16:00,,PT_Normal,,,,,l2uVuRyvIkeVHS9mBkTOAA,IQs/tL9aYE2+tKSb4Kb+GA,,,N,0,0,,,2014-04-05 12:27,2014-04-05 13:21,admin,admin,
581,140324,1749,36486,642,0,N,N,N,CP_Drtn,TT_Task,DT_FixedDUR2,TK_NotStart,BL3-MEP-AC-GF-2020,Chilled Water Pipes and Fittings Installation,4457,112,0,168,0,840,840,168,5251.194852,0,5251.194852,,,,2015-04-02 08:00,2015-04-26 16:00,,2015-03-17 08:00,2015-04-09 16:00,2015-03-17 08:00,2015-04-09 16:00,2015-03-17 08:00,2015-04-09 16:00,2015-04-02 08:00,2015-04-26 16:00,,PT_Normal,,,,,0M4ABa1SokCreo9ehYgTkA,8BjzGhhI4kqTobYxhmLphw,,,N,0,0,,,2014-04-05 12:27,2014-04-05 13:21,admin,admin,
582,140325,1749,36486,642,0,N,N,N,CP_Drtn,TT_Task,DT_FixedDUR2,TK_NotStart,BL3-MEP-AC-GF-2040,Chilled Water Pipes Pressure Test,4457,544,0,48,0,96,96,48,587.116683,0,587.116683,,,,2015-06-25 08:00,2015-06-30 16:00,,2015-04-11 08:00,2015-04-16 16:00,2015-04-11 08:00,2015-04-16 16:00,2015-04-11 08:00,2015-04-16 16:00,2015-06-25 08:00,2015-06-30 16:00,,PT_Normal,,,,,3D3JUR9AVU+2tjVxqHBx4g,sbbpqLsxfEGGFJ1TpbGDNA,,,N,0,0,,,2014-04-05 12:27,2014-04-05 13:21,admin,admin,
583,140326,1749,36486,642,0,N,N,N,CP_Drtn,TT_Task,DT_FixedDUR2,TK_NotStart,BL3-MEP-AC-GF-2050,Chilled Water Pipes Insulation,4457,1304,80,96,0,384,384,96,1670.208495,0,1670.208495,,,,2015-10-04 08:00,2015-10-15 16:00,,2015-04-18 08:00,2015-04-30 16:00,2015-04-18 08:00,2015-04-30 16:00,2015-04-18 08:00,2015-04-30 16:00,2015-10-04 08:00,2015-10-15 16:00,,PT_Normal,,,,,M2QuZdi6cEGcKfLRAvWF8g,6PPXru6N4kCs34zdjRI85g,,,N,0,0,,,2014-04-05 12:27,2014-04-05 13:21,admin,admin,
584,140327,1749,36486,642,0,N,N,N,CP_Drtn,TT_Task,DT_FixedDUR2,TK_NotStart,BL3-MEP-AC-GF-2060,Valve Package Installation,4457,544,0,48,0,96,96,48,2386.490429,0,2386.490429,,,,2015-07-01 08:00,2015-07-06 16:00,,2015-04-18 08:00,2015-04-23 16:00,2015-04-18 08:00,2015-04-23 16:00,2015-04-18 08:00,2015-04-23 16:00,2015-07-01 08:00,2015-07-06 16:00,,PT_Normal,,,,,XpTVIXBWkEubV1rtGIo0Aw,9FAK6JMq1kGf294QM0DJaw,,,N,0,0,,,2014-04-05 12:27,2014-04-05 13:21,admin,admin,
585,140328,1749,36486,642,0,N,N,N,CP_Drtn,TT_Task,DT_FixedDUR2,TK_NotStart,BL3-MEP-AC-GF-2070,FCU's Drain Pipes Installation,4457,544,152,24,0,48,48,24,519.927167,0,519.927167,,,,2015-07-07 08:00,2015-07-09 16:00,,2015-04-25 08:00,2015-04-27 16:00,2015-04-25 08:00,2015-04-27 16:00,2015-04-25 08:00,2015-04-27 16:00,2015-07-07 08:00,2015-07-09 16:00,,PT_Normal,,,,,tJc5r0C+dEm8zE4YaikKtw,QHr67EPmYkOcXgKFVrJ1zw,,,N,0,0,,,2014-04-05 12:27,2014-04-05 13:21,admin,admin,
586,140329,1749,36487,642,0,N,N,N,CP_Drtn,TT_Task,DT_FixedDUR2,TK_NotStart,BL3-MEP-AC-GF-1000,Supports and Hungers Fixing,,128,16,96,0,192,192,96,338.467259,0,338.467259,,,,2015-03-19 08:00,2015-04-01 16:00,,2015-03-01 08:00,2015-03-14 16:00,2015-03-01 08:00,2015-03-14 16:00,2015-03-01 08:00,2015-03-14 16:00,2015-03-19 08:00,2015-04-01 16:00,,PT_Normal,,,,,HHUuI4PEQk6j9Ta647yj+Q,cHdad3hYVEmXBRF8HvlSuw,,,N,0,0,,,2014-04-05 12:27,2014-04-05 13:21,admin,admin,
587,140330,1749,36488,642,0,N,N,N,CP_Drtn,TT_Task,DT_FixedDUR2,TK_NotStart,BL3-MEP-AC-GF-3000,Grills and Diffusers Fixing,,952,40,96,0,384,384,96,11550.608192,0,11550.608192,,,,2015-10-04 08:00,2015-10-15 16:00,,2015-06-07 08:00,2015-06-18 16:00,2015-06-07 08:00,2015-06-18 16:00,2015-06-07 08:00,2015-06-18 16:00,2015-10-04 08:00,2015-10-15 16:00,,PT_Normal,,,,,PbuuXWeiT06qBY57OFX24w,hVIxed9Flk+PbXMkz8RbIA,,,N,0,0,,,2014-04-05 12:27,2014-04-05 13:21,admin,admin,
588,140331,1749,36599,642,0,N,N,N,CP_Drtn,TT_Task,DT_FixedDUR2,TK_NotStart,BL3-MEP-PL-GF-2030,Floor Drain Installation,,1416,88,48,0,6,6,48,554.143324,0,554.143324,,,,2015-12-01 08:00,2015-12-06 16:00,,2015-06-07 08:00,2015-06-12 16:00,2015-06-07 08:00,2015-06-12 16:00,2015-06-07 08:00,2015-06-12 16:00,2015-12-01 08:00,2015-12-06 16:00,,PT_Normal,,,,,AAn1zdIttUe1YS4X62v8RA,RG9y4zyc70Ox3V58EkN4fw,,,N,0,0,,,2014-04-05 12:27,2014-04-05 13:21,admin,admin,
589,140332,1749,36599,642,0,N,N,N,CP_Drtn,TT_Task,DT_FixedDUR2,TK_NotStart,BL3-MEP-PL-GF-2000,High Level Water Supply Pipes and Fittings Installation,,184,0,168,0,150.02,150.02,168,1329.597866,0,1329.597866,,,,2015-04-13 08:00,2015-05-06 16:00,,2015-03-17 08:00,2015-04-09 16:00,2015-03-17 08:00,2015-04-09 16:00,2015-03-17 08:00,2015-04-09 16:00,2015-04-13 08:00,2015-05-06 16:00,,PT_Normal,,,,,kphPNE+pREWNj8rXVR81Cg,/zl4GkqZJkOQA5/EZ6fRmA,,,N,0,0,,,2014-04-05 12:27,2014-04-05 13:21,admin,admin,
590,140333,1749,36599,642,0,N,N,N,CP_Drtn,TT_Task,DT_FixedDUR2,TK_NotStart,BL3-MEP-PL-GF-2010,High Level Drainage Pipes Installation,,184,0,168,0,244.38,244.38,168,6583.525267,0,6583.525267,,,,2015-04-13 08:00,2015-05-06 16:00,,2015-03-17 08:00,2015-04-09 16:00,2015-03-17 08:00,2015-04-09 16:00,2015-03-17 08:00,2015-04-09 16:00,2015-04-13 08:00,2015-05-06 16:00,,PT_Normal,,,,,OD1Btt9zB0me1Cw68VQzCw,tEBRkQIZOUWI86Ha4syZZg,,,N,0,0,,,2014-04-05 12:27,2014-04-05 13:21,admin,admin,
591,140334,1749,36599,642,0,N,N,N,CP_Drtn,TT_Task,DT_FixedDUR2,TK_NotStart,BL3-MEP-PL-GF-2020,Water Supply Pipes Pressure Test,4456,616,128,48,0,48,48,48,151.744312,0,151.744312,,,,2015-07-04 08:00,2015-07-09 16:00,,2015-04-11 08:00,2015-04-16 16:00,2015-04-11 08:00,2015-04-16 16:00,2015-04-11 08:00,2015-04-16 16:00,2015-07-04 08:00,2015-07-09 16:00,,PT_Normal,,,,,LTyykps5uEKB8VXtPYWrew,RJZAxdXivE2tz5G7KwKAcg,,,N,0,0,,,2014-04-05 12:27,2014-04-05 13:21,admin,admin,
592,140335,1749,36599,642,0,N,N,N,CP_Drtn,TT_Task,DT_FixedDUR2,TK_NotStart,BL3-MEP-PL-GF-2040,Drainage Pipes Gravity Test,,616,128,48,0,48,48,48,826.240719,0,826.240719,,,,2015-07-04 08:00,2015-07-09 16:00,,2015-04-11 08:00,2015-04-16 16:00,2015-04-11 08:00,2015-04-16 16:00,2015-04-11 08:00,2015-04-16 16:00,2015-07-04 08:00,2015-07-09 16:00,,PT_Normal,,,,,Y4ttxCwtc0SOLtV2s3I37w,xdoTh+oVzEW9AqkShHy0gA,,,N,0,0,,,2014-04-05 12:27,2014-04-05 13:21,admin,admin,
593,140336,1749,36491,642,0,N,N,N,CP_Drtn,TT_Task,DT_FixedDUR2,TK_NotStart,BL3-MEP-PL-GF-1000,Low Level Water Supply Pipes Installation,,200,16,96,0,42,42,96,725.216846,0,725.216846,,,,2015-03-30 08:00,2015-04-12 16:00,,2015-03-01 08:00,2015-03-14 16:00,2015-03-01 08:00,2015-03-14 16:00,2015-03-01 08:00,2015-03-14 16:00,2015-03-30 08:00,2015-04-12 16:00,,PT_Normal,,,,,7ve2XZOTsk6BI8t9X4q9/Q,9Ihehq+3gUyvsk5VIAcOow,,,N,0,0,,,2014-04-05 12:27,2014-04-05 13:21,admin,admin,
594,140337,1749,36491,642,0,N,N,N,CP_Drtn,TT_Task,DT_FixedDUR2,TK_NotStart,BL3-MEP-PL-GF-1010,Low Level Drainage Pipes Installation,,200,16,96,0,12.67,12.67,96,94.429262,0,94.429262,,,,2015-03-30 08:00,2015-04-12 16:00,,2015-03-01 08:00,2015-03-14 16:00,2015-03-01 08:00,2015-03-14 16:00,2015-03-01 08:00,2015-03-14 16:00,2015-03-30 08:00,2015-04-12 16:00,,PT_Normal,,,,,XN5ge7xtOEu0OkY0uiDpEA,fw+sxaIHMkSThtD2VwXjbQ,,,N,0,0,,,2014-04-05 12:27,2014-04-05 13:21,admin,admin,
595,140338,1749,36491,642,0,N,N,N,CP_Drtn,TT_Task,DT_FixedDUR2,TK_NotStart,BL3-MEP-PL-GF-1020,Supports  installation for High level Pipes,,200,16,96,0,16.352,16.352,96,831.682549,0,831.682549,,,,2015-03-30 08:00,2015-04-12 16:00,,2015-03-01 08:00,2015-03-14 16:00,2015-03-01 08:00,2015-03-14 16:00,2015-03-01 08:00,2015-03-14 16:00,2015-03-30 08:00,2015-04-12 16:00,,PT_Normal,,,,,f3ElVyF/nUG6/Rt2hUmaiA,vEQrCoRYfkeJrsVA+JLznQ,,,N,0,0,,,2014-04-05 12:27,2014-04-05 13:21,admin,admin,
596,140339,1749,36492,642,0,N,N,N,CP_Drtn,TT_Task,DT_FixedDUR2,TK_NotStart,BL3-MEP-PL-GF-3000,Sanitary Ware Installation Including Connection,,384,0,112,0,383.862,383.862,112,4453.516455,0,4453.516455,,,,2015-08-24 08:00,2015-09-06 16:00,,2015-07-07 08:00,2015-07-20 16:00,2015-07-07 08:00,2015-07-20 16:00,2015-07-07 08:00,2015-07-20 16:00,2015-08-24 08:00,2015-09-06 16:00,,PT_Normal,,,,,vol9BXBSAUaLowbSqqFYDQ,vr9dpUUPaEW6nYjeoZC9GA,,,N,0,0,,,2014-04-05 12:27,2014-04-05 13:21,admin,admin,
597,140340,1749,36492,642,0,N,N,N,CP_Drtn,TT_Task,DT_FixedDUR2,TK_NotStart,BL3-MEP-PL-GF-3010,Sanitary Ware Accessories Installation,,1024,88,48,0,36.45,36.45,48,166.215378,0,166.215378,,,,2015-11-26 08:00,2015-12-01 16:00,,2015-07-21 08:00,2015-07-26 16:00,2015-07-21 08:00,2015-07-26 16:00,2015-07-21 08:00,2015-07-26 16:00,2015-11-26 08:00,2015-12-01 16:00,,PT_Normal,,,,,v8CQw5S8pU+C+Q0ruu65Gw,RRV4W1PqikKkWkvzuQujxg,,,N,0,0,,,2014-04-05 12:27,2014-04-05 13:21,admin,admin,
598,140341,1749,36444,642,0,N,N,N,CP_Drtn,TT_Task,DT_FixedDUR2,TK_NotStart,BL3-MEP-FF-GF-3000,Fire Extinguisher Installation,,336,32,16,0,8,8,16,1076.993507,0,1076.993507,,,,2016-01-19 08:00,2016-01-20 16:00,,2015-12-08 08:00,2015-12-09 16:00,2015-12-08 08:00,2015-12-09 16:00,2015-12-08 08:00,2015-12-09 16:00,2016-01-19 08:00,2016-01-20 16:00,,PT_Normal,,,,,AWtmj0ilgU68zAssW5P22Q,hZuI5gC+v0O0vwbC+gRpsQ,,,N,0,0,,,2014-04-05 12:27,2014-04-05 13:21,admin,admin,
599,140342,1749,36444,642,0,N,N,N,CP_Drtn,TT_Task,DT_FixedDUR2,TK_NotStart,BL3-MEP-FF-GF-3010,Hose reel Cabinet Installation and Connection,,48,0,48,0,192,192,48,1336.852298,0,1336.852298,,,,2015-12-13 08:00,2015-12-18 16:00,,2015-12-07 08:00,2015-12-12 16:00,2015-12-07 08:00,2015-12-12 16:00,2015-12-07 08:00,2015-12-12 16:00,2015-12-13 08:00,2015-12-18 16:00,,PT_Normal,,,,,b+ASJ0qdI0S76lmKcrGRAA,8wzVCy9Zn0eKdazuKaQr5A,,,N,0,0,,,2014-04-05 12:27,2014-04-05 13:21,admin,admin,
600,140343,1749,36129,642,0,N,N,N,CP_Drtn,TT_Task,DT_FixedDUR2,TK_NotStart,BL3-MEP-EL-1F-1000,PVC Back Boxes and Conduits  Fixing in Wall,,56,0,176,0,384,384,176,3329.67233,0,3329.67233,,,,2015-03-23 08:00,2015-04-16 16:00,,2015-03-15 08:00,2015-04-08 16:00,2015-03-15 08:00,2015-04-08 16:00,2015-03-15 08:00,2015-04-08 16:00,2015-03-23 08:00,2015-04-16 16:00,,PT_Normal,,,,,01NGcjQGqEeK8MBThh184w,+HBV2NnRf0e7efujq2zDBA,,,N,0,0,,,2014-04-05 12:27,2014-04-05 13:21,admin,admin,
601,140344,1749,36129,642,0,N,N,N,CP_Drtn,TT_Task,DT_FixedDUR2,TK_NotStart,BL3-MEP-EL-1F-1010,DB's Inclosure Fixing,4455,224,104,48,0,96,96,48,2136.399392,0,2136.399392,,,,2015-05-05 08:00,2015-05-11 16:00,,2015-04-02 08:00,2015-04-08 16:00,2015-04-02 08:00,2015-04-08 16:00,2015-04-02 08:00,2015-04-08 16:00,2015-05-05 08:00,2015-05-11 16:00,,PT_Normal,,,,,1M79CYUtnUODpAaW+TlwMQ,G36nwhdPg06hqmNgRQzGIw,,,N,0,0,,,2014-04-05 12:27,2014-04-05 13:21,admin,admin,
602,140345,1749,36130,642,0,N,N,N,CP_Drtn,TT_Task,DT_FixedDUR2,TK_NotStart,BL3-MEP-EL-1F-3010,Lights Fitting Fixing,,664,0,112,0,244,244,112,7336.659378,0,7336.659378,,,,2015-09-15 08:00,2015-09-28 16:00,,2015-06-24 08:00,2015-07-07 16:00,2015-06-24 08:00,2015-07-07 16:00,2015-06-24 08:00,2015-07-07 16:00,2015-09-15 08:00,2015-09-28 16:00,,PT_Normal,,,,,gU7T7xlLAkeXJLkB57tpVg,vVRZu91JsUq8txwJ6Iqsmw,,,N,0,0,,,2014-04-05 12:27,2014-04-05 13:21,admin,admin,
603,140346,1749,36130,642,0,N,N,N,CP_Drtn,TT_Task,DT_FixedDUR2,TK_NotStart,BL3-MEP-EL-1F-3060,Sockets and Switches Fixing,,1192,40,64,0,128,128,64,1174.957134,0,1174.957134,,,,2015-11-20 08:00,2015-11-27 16:00,,2015-06-24 08:00,2015-07-01 16:00,2015-06-24 08:00,2015-07-01 16:00,2015-06-24 08:00,2015-07-01 16:00,2015-11-20 08:00,2015-11-27 16:00,,PT_Normal,,,,,XTqIGCztv0WJp0P7k+Lj/g,fx/TdGg8ok2+QpEI+F1Zdw,,,N,0,0,,,2014-04-05 12:27,2014-04-05 13:21,admin,admin,
604,140347,1749,36130,642,0,N,N,N,CP_Drtn,TT_Task,DT_FixedDUR2,TK_NotStart,BL3-MEP-EL-1F-3020,Emergency Light Fixing,,1232,40,64,0,128,128,64,5722.024623,0,5722.024623,,,,2015-11-25 08:00,2015-12-02 16:00,,2015-06-24 08:00,2015-07-01 16:00,2015-06-24 08:00,2015-07-01 16:00,2015-06-24 08:00,2015-07-01 16:00,2015-11-25 08:00,2015-12-02 16:00,,PT_Normal,,,,,nw2HPWFmM0+gEOkR+DodQw,2tOBiG7GeEC1ATNNs3bTSw,,,N,0,0,,,2014-04-05 12:27,2014-04-05 13:21,admin,admin,
605,140348,1749,36130,642,0,N,N,N,CP_Drtn,TT_Task,DT_FixedDUR2,TK_NotStart,BL3-MEP-EL-1F-3030,Fire Alarm System Detector Installation,,840,8,96,0,192,192,96,4046.378277,0,4046.378277,,,,2015-10-07 08:00,2015-10-18 16:00,,2015-06-24 08:00,2015-07-05 16:00,2015-06-24 08:00,2015-07-05 16:00,2015-06-24 08:00,2015-07-05 16:00,2015-10-07 08:00,2015-10-18 16:00,,PT_Normal,,,,,Z/DF473FDk294ETUEyJhFQ,7nKAmTcXgEelwCtOnVJ5qw,,,N,0,0,,,2014-04-05 12:27,2014-04-05 13:21,admin,admin,
606,140349,1749,36130,642,0,N,N,N,CP_Drtn,TT_Task,DT_FixedDUR2,TK_NotStart,BL3-MEP-EL-1F-3070,SMDB's  Termination and Final Connection,,1360,56,48,0,192,192,48,2791.825001,0,2791.825001,,,,2015-12-11 08:00,2015-12-16 16:00,,2015-06-24 08:00,2015-06-29 16:00,2015-06-24 08:00,2015-06-29 16:00,2015-06-24 08:00,2015-06-29 16:00,2015-12-11 08:00,2015-12-16 16:00,,PT_Normal,,,,,2QhgweRhO0mjWnhQSgLlNA,QSgOJaTqvkC51gZyjpq95Q,,,N,0,0,,,2014-04-05 12:27,2014-04-05 13:21,admin,admin,
607,140350,1749,36104,642,0,N,N,N,CP_Drtn,TT_Task,DT_FixedDUR2,TK_NotStart,BL3-MEP-EL-1F-3000,Power Cable Puling,,760,0,112,0,168,168,112,6375.759893,0,6375.759893,,,,2015-09-09 08:00,2015-09-22 16:00,,2015-06-06 08:00,2015-06-19 16:00,2015-06-06 08:00,2015-06-19 16:00,2015-06-06 08:00,2015-06-19 16:00,2015-09-09 08:00,2015-09-22 16:00,,PT_Normal,,,,,vwPo3R/T0Uq75N+oKPC6nA,Xrb8Gs/ckk6LAK6faUN9kg,,,N,0,0,,,2014-04-05 12:27,2014-04-05 13:21,admin,admin,
608,140351,1749,36130,642,0,N,N,N,CP_Drtn,TT_Task,DT_FixedDUR2,TK_NotStart,BL3-MEP-EL-1F-3040,Despature for Low Current  System Installation,4455,1536,0,112,0,336,336,112,72752.164276,0,72752.164276,,,,2016-01-02 08:00,2016-01-15 16:00,,2015-06-24 08:00,2015-07-07 16:00,2015-06-24 08:00,2015-07-07 16:00,2015-06-24 08:00,2015-07-07 16:00,2016-01-02 08:00,2016-01-15 16:00,,PT_Normal,,,,,pK8VjyGfm0uOxCF3Rdz9+A,YiK8Glrw1EyjkDZoAJlffw,,,N,0,0,,,2014-04-05 12:27,2014-04-05 13:21,admin,admin,
609,140352,1749,36130,642,0,N,N,N,CP_Drtn,TT_Task,DT_FixedDUR2,TK_NotStart,BL3-MEP-EL-1F-3050,Low Current  System Outlet installation and Connection,4455,1536,1232,80,0,80,80,80,3870.787498,0,3870.787498,,,,2016-01-16 08:00,2016-01-25 16:00,,2015-07-08 08:00,2015-07-17 16:00,2015-07-08 08:00,2015-07-17 16:00,2015-07-08 08:00,2015-07-17 16:00,2016-01-16 08:00,2016-01-25 16:00,,PT_Normal,,,,,5RGi44IaY0y1bFapIkN44w,YTvH0zirkE+zHIPdYUdiPQ,,,N,0,0,,,2014-04-05 12:27,2014-04-05 13:21,admin,admin,
610,140353,1749,36104,642,0,N,N,N,CP_Drtn,TT_Task,DT_FixedDUR2,TK_NotStart,BL3-MEP-EL-1F-2060,SMDB's  Installation,,1552,56,48,0,45,45,48,4202.598932,0,4202.598932,,,,2015-12-05 08:00,2015-12-10 16:00,,2015-05-24 08:00,2015-05-30 16:00,2015-05-24 08:00,2015-05-30 16:00,2015-05-24 08:00,2015-05-30 16:00,2015-12-05 08:00,2015-12-10 16:00,,PT_Normal,,,,,bZ18ePt9yE2PnHHdXOvmPA,AyRPyo6d80Cjud6tAvQIxQ,,,N,0,0,,,2014-04-05 12:27,2014-04-05 13:21,admin,admin,
611,140354,1749,36104,642,0,N,N,N,CP_Drtn,TT_Task,DT_FixedDUR2,TK_NotStart,BL3-MEP-EL-1F-2000,Lighting  Wiring,,608,48,96,0,241.713,241.713,96,3578.08423,0,3578.08423,,,,2015-07-13 08:00,2015-07-24 16:00,,2015-04-22 08:00,2015-05-05 16:00,2015-04-22 08:00,2015-05-05 16:00,2015-04-22 08:00,2015-05-05 16:00,2015-07-13 08:00,2015-07-24 16:00,,PT_Normal,,,,,e4TbgliMA06c68lNAi+RQQ,i26q2YbXU0CY9xg9N+V4iA,,,N,0,0,,,2014-04-05 12:27,2014-04-05 13:21,admin,admin,
612,140355,1749,36104,642,0,N,N,N,CP_Drtn,TT_Task,DT_FixedDUR2,TK_NotStart,BL3-MEP-EL-1F-2010,Power Points Wiring,,608,48,96,0,192,192,96,2906.213289,0,2906.213289,,,,2015-07-13 08:00,2015-07-24 16:00,,2015-04-22 08:00,2015-05-05 16:00,2015-04-22 08:00,2015-05-05 16:00,2015-04-22 08:00,2015-05-05 16:00,2015-07-13 08:00,2015-07-24 16:00,,PT_Normal,,,,,3wNk+mVv40CN5/qMn7YXsQ,n1oDnD2gQUuYneQZxBrm7Q,,,N,0,0,,,2014-04-05 12:27,2014-04-05 13:21,admin,admin,
613,140356,1749,36104,642,0,N,N,N,CP_Drtn,TT_Task,DT_FixedDUR2,TK_NotStart,BL3-MEP-EL-1F-2020,Cable Tray and Trunking Installation,,608,32,112,0,336,336,112,9078.448617,0,9078.448617,,,,2015-07-11 08:00,2015-07-24 16:00,,2015-04-20 08:00,2015-05-05 16:00,2015-04-20 08:00,2015-05-05 16:00,2015-04-20 08:00,2015-05-05 16:00,2015-07-11 08:00,2015-07-24 16:00,,PT_Normal,,,,,Qh4PCZSonkuR4Ek0SS+0iA,g1/TIF9rPU6ApfrQ37QZVQ,,,N,0,0,,,2014-04-05 12:27,2014-04-05 13:21,admin,admin,
614,140357,1749,36104,642,0,N,N,N,CP_Drtn,TT_Task,DT_FixedDUR2,TK_NotStart,BL3-MEP-EL-1F-2030,Emergency Light Wiring,,608,80,64,0,128,128,64,1210.028798,0,1210.028798,,,,2015-07-17 08:00,2015-07-24 16:00,,2015-04-27 08:00,2015-05-05 16:00,2015-04-27 08:00,2015-05-05 16:00,2015-04-27 08:00,2015-05-05 16:00,2015-07-17 08:00,2015-07-24 16:00,,PT_Normal,,,,,fM5OHE/EX064qe8dVlVaUQ,cKb0mZ1uWUmlv+dJ7Kcfew,,,N,0,0,,,2014-04-05 12:27,2014-04-05 13:21,admin,admin,
615,140358,1749,36104,642,0,N,N,N,CP_Drtn,TT_Task,DT_FixedDUR2,TK_NotStart,BL3-MEP-EL-1F-2040,Fire Alarm System Wiring,,608,48,96,0,192,192,96,7123.009694,0,7123.009694,,,,2015-07-13 08:00,2015-07-24 16:00,,2015-04-22 08:00,2015-05-05 16:00,2015-04-22 08:00,2015-05-05 16:00,2015-04-22 08:00,2015-05-05 16:00,2015-07-13 08:00,2015-07-24 16:00,,PT_Normal,,,,,ABumc1oJvE27d4GBdyQvqg,ngybXTLAA0m5vIZ+5Ac1ZQ,,,N,0,0,,,2014-04-05 12:27,2014-04-05 13:21,admin,admin,
616,140359,1749,36104,642,0,N,N,N,CP_Drtn,TT_Task,DT_FixedDUR2,TK_NotStart,BL3-MEP-EL-1F-2070,DB's Installation and Termination,4455,392,0,96,0,288,288,96,4982.925025,0,4982.925025,,,,2015-07-13 08:00,2015-07-24 16:00,,2015-05-24 08:00,2015-06-05 16:00,2015-05-24 08:00,2015-06-05 16:00,2015-05-24 08:00,2015-06-05 16:00,2015-07-13 08:00,2015-07-24 16:00,,PT_Normal,,,,,CZXV3oJ8UEe5k+aEiqt3GQ,mC9uNYcKXkOMOWV0zhNOcw,,,N,0,0,,,2014-04-05 12:27,2014-04-05 13:21,admin,admin,
617,140360,1749,36104,642,0,N,N,N,CP_Drtn,TT_Task,DT_FixedDUR2,TK_NotStart,BL3-MEP-EL-1F-2050,Low Current  System Wiring,4455,1896,360,112,0,244,244,112,38231.783306,0,38231.783306,,,,2015-12-19 08:00,2016-01-01 16:00,,2015-04-20 08:00,2015-05-05 16:00,2015-04-20 08:00,2015-05-05 16:00,2015-04-20 08:00,2015-05-05 16:00,2015-12-19 08:00,2016-01-01 16:00,,PT_Normal,,,,,RnyTvFJWRE2FHtM3/hBGkA,rOnI9zWwP0ikGjWG/QKdzQ,,,N,0,0,,,2014-04-05 12:27,2014-04-05 13:21,admin,admin,
618,140361,1749,36334,642,0,N,N,N,CP_Drtn,TT_Task,DT_FixedDUR2,TK_NotStart,BL3-MEP-AC-1F-1000,Supports and Hungers Fixing,,120,16,96,0,192,192,96,338.467259,0,338.467259,,,,2015-04-13 08:00,2015-04-26 16:00,,2015-03-26 08:00,2015-04-08 16:00,2015-03-26 08:00,2015-04-08 16:00,2015-03-26 08:00,2015-04-08 16:00,2015-04-13 08:00,2015-04-26 16:00,,PT_Normal,,,,,d2P9kOCKz0KCNM2l84eR2A,yHE/LsVJ9ESn5qnFCrJctg,,,N,0,0,,,2014-04-05 12:27,2014-04-05 13:21,admin,admin,
619,140362,1749,36376,642,0,N,N,N,CP_Drtn,TT_Task,DT_FixedDUR2,TK_NotStart,BL3-MEP-AC-1F-2010,Duct Installation and Insulation,4454,112,0,168,0,263,263,168,4350.939473,0,4350.939473,,,,2015-04-28 08:00,2015-05-21 16:00,,2015-04-12 08:00,2015-05-05 16:00,2015-04-12 08:00,2015-05-05 16:00,2015-04-12 08:00,2015-05-05 16:00,2015-04-28 08:00,2015-05-21 16:00,,PT_Normal,,,,,K74JgLboTk25wp33By4dqg,BzJ5HriuUk6EsF6jv6fdvQ,,,N,0,0,,,2014-04-05 12:27,2014-04-05 13:21,admin,admin,
620,140363,1749,36376,642,0,N,N,N,CP_Drtn,TT_Task,DT_FixedDUR2,TK_NotStart,BL3-MEP-AC-1F-2030,Duct Accessories Installation,4457,496,56,112,0,448,448,112,666.965527,0,666.965527,,,,2015-07-11 08:00,2015-07-24 16:00,,2015-05-06 08:00,2015-05-21 16:00,2015-05-06 08:00,2015-05-21 16:00,2015-05-06 08:00,2015-05-21 16:00,2015-07-11 08:00,2015-07-24 16:00,,PT_Normal,,,,,f1l5Cu5HQ0+3PQQQ2uu/RQ,TOOfkjD04Ey+AV91hsfz5g,,,N,0,0,,,2014-04-05 12:27,2014-04-05 13:21,admin,admin,
621,140364,1749,36376,642,0,N,N,N,CP_Drtn,TT_Task,DT_FixedDUR2,TK_NotStart,BL3-MEP-AC-1F-2000,FCU's Installation,4457,536,48,64,0,192,192,64,6000.055155,0,6000.055155,,,,2015-07-08 08:00,2015-07-15 16:00,,2015-04-27 08:00,2015-05-05 16:00,2015-04-27 08:00,2015-05-05 16:00,2015-04-27 08:00,2015-05-05 16:00,2015-07-08 08:00,2015-07-15 16:00,,PT_Normal,,,,,LCduxmgFOEGeAyE6jmrAmA,9pyXvgrwRkmHOv7BoDkHfA,,,N,0,0,,,2014-04-05 12:27,2014-04-05 13:21,admin,admin,
622,140365,1749,36376,642,0,N,N,N,CP_Drtn,TT_Task,DT_FixedDUR2,TK_NotStart,BL3-MEP-AC-1F-2020,Chilled Water Pipes and Fittings Installation,4457,104,0,168,0,840,840,168,5251.194852,0,5251.194852,,,,2015-04-27 08:00,2015-05-20 16:00,,2015-04-12 08:00,2015-05-05 16:00,2015-04-12 08:00,2015-05-05 16:00,2015-04-12 08:00,2015-05-05 16:00,2015-04-27 08:00,2015-05-20 16:00,,PT_Normal,,,,,A8XrGyqrtkCr0hjcw1ZMtw,VfaXzvBjH0ed+/p7XUXLEw,,,N,0,0,,,2014-04-05 12:27,2014-04-05 13:21,admin,admin,
623,140366,1749,36376,642,0,N,N,N,CP_Drtn,TT_Task,DT_FixedDUR2,TK_NotStart,BL3-MEP-AC-1F-2040,Chilled Water Pipes Pressure Test,4457,488,0,48,0,96,96,48,587.116683,0,587.116683,,,,2015-07-10 08:00,2015-07-15 16:00,,2015-05-06 08:00,2015-05-12 16:00,2015-05-06 08:00,2015-05-12 16:00,2015-05-06 08:00,2015-05-12 16:00,2015-07-10 08:00,2015-07-15 16:00,,PT_Normal,,,,,PEGOM8vtA0mu1ngs2SLztw,30gWb8LaQ0Sk1Efe57UxNA,,,N,0,0,,,2014-04-05 12:27,2014-04-05 13:21,admin,admin,
624,140367,1749,36376,642,0,N,N,N,CP_Drtn,TT_Task,DT_FixedDUR2,TK_NotStart,BL3-MEP-AC-1F-2050,Chilled Water Pipes Insulation,4457,1224,72,96,0,384,384,96,1670.208495,0,1670.208495,,,,2015-10-16 08:00,2015-10-27 16:00,,2015-05-13 08:00,2015-05-26 16:00,2015-05-13 08:00,2015-05-26 16:00,2015-05-13 08:00,2015-05-26 16:00,2015-10-16 08:00,2015-10-27 16:00,,PT_Normal,,,,,9FWfTh2kf0CFjx8PeVoLEg,9t2KF7UfTEmZDf3du6peyQ,,,N,0,0,,,2014-04-05 12:27,2014-04-05 13:21,admin,admin,
625,140368,1749,36376,642,0,N,N,N,CP_Drtn,TT_Task,DT_FixedDUR2,TK_NotStart,BL3-MEP-AC-1F-2060,Valve Package Installation,4457,488,0,48,0,96,96,48,2386.490429,0,2386.490429,,,,2015-07-16 08:00,2015-07-21 16:00,,2015-05-13 08:00,2015-05-19 16:00,2015-05-13 08:00,2015-05-19 16:00,2015-05-13 08:00,2015-05-19 16:00,2015-07-16 08:00,2015-07-21 16:00,,PT_Normal,,,,,oVpnKPee10y4Gf141vkkcg,GPn8OaRRvU2Iq0ilbgM4ig,,,N,0,0,,,2014-04-05 12:27,2014-04-05 13:21,admin,admin,
626,140369,1749,36376,642,0,N,N,N,CP_Drtn,TT_Task,DT_FixedDUR2,TK_NotStart,BL3-MEP-AC-1F-2070,FCU's Drain Pipes Installation,4457,488,144,24,0,48,48,24,519.927167,0,519.927167,,,,2015-07-22 08:00,2015-07-24 16:00,,2015-05-20 08:00,2015-05-23 16:00,2015-05-20 08:00,2015-05-23 16:00,2015-05-20 08:00,2015-05-23 16:00,2015-07-22 08:00,2015-07-24 16:00,,PT_Normal,,,,,RknqHrhR1k6UNfTUurlCbg,cKADGBrP6ECK/JnoGhGvwQ,,,N,0,0,,,2014-04-05 12:27,2014-04-05 13:21,admin,admin,
627,140370,1749,36445,642,0,N,N,N,CP_Drtn,TT_Task,DT_FixedDUR2,TK_NotStart,BL3-MEP-AC-1F-3000,Grills and Diffusers Fixing,,912,8,96,0,384,384,96,11550.608192,0,11550.608192,,,,2015-10-16 08:00,2015-10-27 16:00,,2015-06-24 08:00,2015-07-05 16:00,2015-06-24 08:00,2015-07-05 16:00,2015-06-24 08:00,2015-07-05 16:00,2015-10-16 08:00,2015-10-27 16:00,,PT_Normal,,,,,sOa/mqp1NUi33kir5YNy8g,xIimR8NYwUy/By8t1fDPjw,,,N,0,0,,,2014-04-05 12:27,2014-04-05 13:21,admin,admin,
628,140371,1749,36366,642,0,N,N,N,CP_Drtn,TT_Task,DT_FixedDUR2,TK_NotStart,BL3-MEP-FF-1F-3000,Fire Extinguisher Installation,,304,32,16,0,8,8,16,1076.993507,0,1076.993507,,,,2016-01-21 08:00,2016-01-22 16:00,,2015-12-14 08:00,2015-12-15 16:00,2015-12-14 08:00,2015-12-15 16:00,2015-12-14 08:00,2015-12-15 16:00,2016-01-21 08:00,2016-01-22 16:00,,PT_Normal,,,,,43lxJB8VEkeKhWqJrZnUrQ,Eiyuzwgs20eorkZAUTEkpQ,,,N,0,0,,,2014-04-05 12:27,2014-04-05 13:21,admin,admin,
629,140372,1749,36366,642,0,N,N,N,CP_Drtn,TT_Task,DT_FixedDUR2,TK_NotStart,BL3-MEP-FF-1F-3010,Hose reel Cabinet Installation and Connection,,48,0,48,0,192,192,48,1336.852298,0,1336.852298,,,,2015-12-19 08:00,2015-12-24 16:00,,2015-12-13 08:00,2015-12-18 16:00,2015-12-13 08:00,2015-12-18 16:00,2015-12-13 08:00,2015-12-18 16:00,2015-12-19 08:00,2015-12-24 16:00,,PT_Normal,,,,,A7UkZCdYKk2XDmgTB75eDA,uwEIf/MLk0eilzbQaW3gLg,,,N,0,0,,,2014-04-05 12:27,2014-04-05 13:21,admin,admin,
630,140373,1749,36363,642,0,N,N,N,CP_Drtn,TT_Task,DT_FixedDUR2,TK_NotStart,BL3-MEP-PL-1F-1000,Low Level Water Supply Pipes Installation,,192,16,96,0,42,42,96,725.216846,0,725.216846,,,,2015-04-23 08:00,2015-05-06 16:00,,2015-03-26 08:00,2015-04-08 16:00,2015-03-26 08:00,2015-04-08 16:00,2015-03-26 08:00,2015-04-08 16:00,2015-04-23 08:00,2015-05-06 16:00,,PT_Normal,,,,,mZHpA19CC0eDUC39rKUh0A,eXRqBx77Q06MtrpMHtMocw,,,N,0,0,,,2014-04-05 12:27,2014-04-05 13:21,admin,admin,
631,140374,1749,36363,642,0,N,N,N,CP_Drtn,TT_Task,DT_FixedDUR2,TK_NotStart,BL3-MEP-PL-1F-1010,Low Level Drainage Pipes Installation,,192,16,96,0,12.67,12.67,96,2291.461713,0,2291.461713,,,,2015-04-23 08:00,2015-05-06 16:00,,2015-03-26 08:00,2015-04-08 16:00,2015-03-26 08:00,2015-04-08 16:00,2015-03-26 08:00,2015-04-08 16:00,2015-04-23 08:00,2015-05-06 16:00,,PT_Normal,,,,,OThRUrGJI0+lym/kj+WZzA,WU4SSkRVEkewYg61j0Lwpg,,,N,0,0,,,2014-04-05 12:27,2014-04-05 13:21,admin,admin,
632,140375,1749,36363,642,0,N,N,N,CP_Drtn,TT_Task,DT_FixedDUR2,TK_NotStart,BL3-MEP-PL-1F-1020,Supports  installation for High level Pipes,,192,16,96,0,16.352,16.352,96,831.682549,0,831.682549,,,,2015-04-23 08:00,2015-05-06 16:00,,2015-03-26 08:00,2015-04-08 16:00,2015-03-26 08:00,2015-04-08 16:00,2015-03-26 08:00,2015-04-08 16:00,2015-04-23 08:00,2015-05-06 16:00,,PT_Normal,,,,,11YDPIt6JkCTxSTGKm6XDA,RCivdCtNtkGdictI08akTQ,,,N,0,0,,,2014-04-05 12:27,2014-04-05 13:21,admin,admin,
633,140376,1749,36550,642,0,N,N,N,CP_Drtn,TT_Task,DT_FixedDUR2,TK_NotStart,BL3-MEP-PL-1F-2030,Floor Drain Installation,,1328,56,48,0,6,6,48,554.143324,0,554.143324,,,,2015-12-07 08:00,2015-12-12 16:00,,2015-06-24 08:00,2015-06-29 16:00,2015-06-24 08:00,2015-06-29 16:00,2015-06-24 08:00,2015-06-29 16:00,2015-12-07 08:00,2015-12-12 16:00,,PT_Normal,,,,,4rkyc5uoGkuQOVa/qGiOvA,IEqyt56Z4EWa1K3+tXKxKA,,,N,0,0,,,2014-04-05 12:27,2014-04-05 13:21,admin,admin,
634,140377,1749,36550,642,0,N,N,N,CP_Drtn,TT_Task,DT_FixedDUR2,TK_NotStart,BL3-MEP-PL-1F-2000,High Level Water Supply Pipes and Fittings Installation,,176,0,168,0,150.02,150.02,168,1329.597866,0,1329.597866,,,,2015-05-07 08:00,2015-05-31 16:00,,2015-04-12 08:00,2015-05-05 16:00,2015-04-12 08:00,2015-05-05 16:00,2015-04-12 08:00,2015-05-05 16:00,2015-05-07 08:00,2015-05-31 16:00,,PT_Normal,,,,,XAWF8mQL20a+2mMPSqZ1gw,fGen506unkeAdXR2dTcUZA,,,N,0,0,,,2014-04-05 12:27,2014-04-05 13:21,admin,admin,
635,140378,1749,36550,642,0,N,N,N,CP_Drtn,TT_Task,DT_FixedDUR2,TK_NotStart,BL3-MEP-PL-1F-2010,High Level Drainage Pipes Installation,,176,0,168,0,244.38,244.38,168,6583.525267,0,6583.525267,,,,2015-05-07 08:00,2015-05-31 16:00,,2015-04-12 08:00,2015-05-05 16:00,2015-04-12 08:00,2015-05-05 16:00,2015-04-12 08:00,2015-05-05 16:00,2015-05-07 08:00,2015-05-31 16:00,,PT_Normal,,,,,QgRufyfvcU+EY0GOYVhe8Q,XUO7TyHwQ0CxvIh7JFtbGw,,,N,0,0,,,2014-04-05 12:27,2014-04-05 13:21,admin,admin,
636,140379,1749,36550,642,0,N,N,N,CP_Drtn,TT_Task,DT_FixedDUR2,TK_NotStart,BL3-MEP-PL-1F-2020,Water Supply Pipes Pressure Test,4456,560,120,48,0,48,48,48,151.744312,0,151.744312,,,,2015-07-19 08:00,2015-07-24 16:00,,2015-05-06 08:00,2015-05-12 16:00,2015-05-06 08:00,2015-05-12 16:00,2015-05-06 08:00,2015-05-12 16:00,2015-07-19 08:00,2015-07-24 16:00,,PT_Normal,,,,,0JFCRhJHYkSZwf/GZ4f4qw,krWqrthcTU2Le5H5fR+jug,,,N,0,0,,,2014-04-05 12:27,2014-04-05 13:21,admin,admin,
637,140380,1749,36550,642,0,N,N,N,CP_Drtn,TT_Task,DT_FixedDUR2,TK_NotStart,BL3-MEP-PL-1F-2040,Drainage Pipes Gravity Test,,560,120,48,0,48,48,48,826.240719,0,826.240719,,,,2015-07-19 08:00,2015-07-24 16:00,,2015-05-06 08:00,2015-05-12 16:00,2015-05-06 08:00,2015-05-12 16:00,2015-05-06 08:00,2015-05-12 16:00,2015-07-19 08:00,2015-07-24 16:00,,PT_Normal,,,,,oMdtbvAI5k+wBgOn7M6hQA,b+EPriwHpEemsyfmdlpScA,,,N,0,0,,,2014-04-05 12:27,2014-04-05 13:21,admin,admin,
638,140381,1749,36351,642,0,N,N,N,CP_Drtn,TT_Task,DT_FixedDUR2,TK_NotStart,BL3-MEP-PL-1F-3000,Sanitary Ware Installation Including Connection,,360,0,112,0,383.862,383.862,112,4453.516455,0,4453.516455,,,,2015-09-07 08:00,2015-09-20 16:00,,2015-07-24 08:00,2015-08-06 16:00,2015-07-24 08:00,2015-08-06 16:00,2015-07-24 08:00,2015-08-06 16:00,2015-09-07 08:00,2015-09-20 16:00,,PT_Normal,,,,,YXEVDzSGkUa5Zw9HyJD/vQ,YIR5r95ifUyhiBSjx43kzg,,,N,0,0,,,2014-04-05 12:27,2014-04-05 13:21,admin,admin,
639,140382,1749,36351,642,0,N,N,N,CP_Drtn,TT_Task,DT_FixedDUR2,TK_NotStart,BL3-MEP-PL-1F-3010,Sanitary Ware Accessories Installation,,936,72,48,0,36.45,36.45,48,166.215378,0,166.215378,,,,2015-12-02 08:00,2015-12-07 16:00,,2015-08-07 08:00,2015-08-12 16:00,2015-08-07 08:00,2015-08-12 16:00,2015-08-07 08:00,2015-08-12 16:00,2015-12-02 08:00,2015-12-07 16:00,,PT_Normal,,,,,dxr7Gzh2uE2oLcjZbJJ83w,ENwqtCDnGUCgkYGPpT2piw,,,N,0,0,,,2014-04-05 12:27,2014-04-05 13:21,admin,admin,
640,140383,1749,35645,642,0,N,N,N,CP_Drtn,TT_Task,DT_FixedDUR2,TK_NotStart,BL3-LFT-10,Lift Installation,,888,0,480,0,0,0,480,365841.1867,0,365841.1867,,,,2016-02-01 08:00,2016-03-31 16:00,,2015-10-13 08:00,2015-12-11 16:00,2015-10-13 08:00,2015-12-11 16:00,2015-10-13 08:00,2015-12-11 16:00,2016-02-01 08:00,2016-03-31 16:00,,PT_Normal,,,,,kB3KpFTQJkqP1WIvgF9O8g,rGkZF1cG+UWxiD3ue6vQcA,,,N,0,0,,,2014-04-05 12:27,2014-04-05 13:21,admin,admin,
641,140384,1749,36094,642,0,N,N,N,CP_Drtn,TT_Task,DT_FixedDUR2,TK_NotStart,BL3-MEP-EL-5F-1000,PVC Back Boxes and Conduits  Fixing in Wall,,56,0,176,0,384,384,176,3329.67233,0,3329.67233,,,,2015-06-29 08:00,2015-07-20 16:00,,2015-06-22 08:00,2015-07-13 16:00,2015-06-22 08:00,2015-07-13 16:00,2015-06-22 08:00,2015-07-13 16:00,2015-06-29 08:00,2015-07-20 16:00,,PT_Normal,,,,,dNXZA5thJEmdqP5Z2Ob2bQ,H+0ou6rHQ06Wur5U39seOw,,,N,0,0,,,2014-04-05 12:27,2014-04-05 13:21,admin,admin,
642,140385,1749,36094,642,0,N,N,N,CP_Drtn,TT_Task,DT_FixedDUR2,TK_NotStart,BL3-MEP-EL-5F-1010,DB's Inclosure Fixing,4455,232,96,48,0,96,96,48,2136.399392,0,2136.399392,,,,2015-08-02 08:00,2015-08-07 16:00,,2015-07-04 08:00,2015-07-09 16:00,2015-07-04 08:00,2015-07-09 16:00,2015-07-04 08:00,2015-07-09 16:00,2015-08-02 08:00,2015-08-07 16:00,,PT_Normal,,,,,gPSL//VS+EW2uIm9At6EJg,gXBuaDh0GEWxUFZZABkiCw,,,N,0,0,,,2014-04-05 12:27,2014-04-05 13:21,admin,admin,
643,140386,1749,36603,642,0,N,N,N,CP_Drtn,TT_Task,DT_FixedDUR2,TK_NotStart,BL3-MEP-AC-5F-1000,Supports and Hungers Fixing,,120,16,96,0,192,192,96,338.467259,0,338.467259,,,,2015-07-13 08:00,2015-07-24 16:00,,2015-06-28 08:00,2015-07-09 16:00,2015-06-28 08:00,2015-07-09 16:00,2015-06-28 08:00,2015-07-09 16:00,2015-07-13 08:00,2015-07-24 16:00,,PT_Normal,,,,,7oGDSdSSlEWkDCz26W7nCw,H4uoNsRaN0+EqZYan7o39Q,,,N,0,0,,,2014-04-05 12:27,2014-04-05 13:21,admin,admin,
644,140387,1749,36605,642,0,N,N,N,CP_Drtn,TT_Task,DT_FixedDUR2,TK_NotStart,BL3-MEP-AC-5F-3000,Grills and Diffusers Fixing,,688,80,96,0,384,384,96,11550.608192,0,11550.608192,,,,2015-12-03 08:00,2015-12-14 16:00,,2015-09-08 08:00,2015-09-19 16:00,2015-09-08 08:00,2015-09-19 16:00,2015-09-08 08:00,2015-09-19 16:00,2015-12-03 08:00,2015-12-14 16:00,,PT_Normal,,,,,vIrSIa7VXE6MakcFQsjRJA,BiIkJ1JQKUO8yU5K/ij/pw,,,N,0,0,,,2014-04-05 12:27,2014-04-05 13:21,admin,admin,
645,140388,1749,36609,642,0,N,N,N,CP_Drtn,TT_Task,DT_FixedDUR2,TK_NotStart,BL3-MEP-PL-5F-3000,Sanitary Ware Installation Including Connection,,200,0,112,0,383.862,383.862,112,4453.516455,0,4453.516455,,,,2015-11-02 08:00,2015-11-15 16:00,,2015-10-08 08:00,2015-10-21 16:00,2015-10-08 08:00,2015-10-21 16:00,2015-10-08 08:00,2015-10-21 16:00,2015-11-02 08:00,2015-11-15 16:00,,PT_Normal,,,,,feq1CAfxy0iUuI3V13VbKw,wtk6jH/8V0uWrBKtUf4MWg,,,N,0,0,,,2014-04-05 12:27,2014-04-05 13:21,admin,admin,
646,140389,1749,36609,642,0,N,N,N,CP_Drtn,TT_Task,DT_FixedDUR2,TK_NotStart,BL3-MEP-PL-5F-3010,Sanitary Ware Accessories Installation,,520,128,48,0,36.45,36.45,48,166.215378,0,166.215378,,,,2015-12-26 08:00,2015-12-31 16:00,,2015-10-22 08:00,2015-10-27 16:00,2015-10-22 08:00,2015-10-27 16:00,2015-10-22 08:00,2015-10-27 16:00,2015-12-26 08:00,2015-12-31 16:00,,PT_Normal,,,,,Jb/t/fV7zk+0DXsBFhtZQQ,wq3xxrumK0CwQ7PxmotY6A,,,N,0,0,,,2014-04-05 12:27,2014-04-05 13:21,admin,admin,
647,140390,1749,36611,642,0,N,N,N,CP_Drtn,TT_Task,DT_FixedDUR2,TK_NotStart,BL3-MEP-FF-5F-3000,Fire Extinguisher Installation,,176,32,16,0,8,8,16,1076.993507,0,1076.993507,,,,2016-01-29 08:00,2016-01-30 16:00,,2016-01-07 08:00,2016-01-08 16:00,2016-01-07 08:00,2016-01-08 16:00,2016-01-07 08:00,2016-01-08 16:00,2016-01-29 08:00,2016-01-30 16:00,,PT_Normal,,,,,hVxQFwM7pUOqBBzNm04aEQ,NSuLwBzfqkuQBk1m7hUHTw,,,N,0,0,,,2014-04-05 12:27,2014-04-05 13:21,admin,admin,
648,140391,1749,36611,642,0,N,N,N,CP_Drtn,TT_Task,DT_FixedDUR2,TK_NotStart,BL3-MEP-FF-5F-3010,Hose reel Cabinet Installation and Connection,,48,0,48,0,192,192,48,1336.852298,0,1336.852298,,,,2016-01-12 08:00,2016-01-17 16:00,,2016-01-06 08:00,2016-01-11 16:00,2016-01-06 08:00,2016-01-11 16:00,2016-01-06 08:00,2016-01-11 16:00,2016-01-12 08:00,2016-01-17 16:00,,PT_Normal,,,,,0teFrNYf30GCM/vFWJMNyA,bEBhNTgxyk2+eFh+dsJ5TA,,,N,0,0,,,2014-04-05 12:27,2014-04-05 13:21,admin,admin,
649,140392,1749,36409,642,0,N,N,N,CP_Drtn,TT_Task,DT_FixedDUR2,TK_NotStart,BL3-MEP-AC-3F-1000,Supports and Hungers Fixing,,136,32,96,0,192,192,96,338.467259,0,338.467259,,,,2015-06-01 08:00,2015-06-12 16:00,,2015-05-12 08:00,2015-05-25 16:00,2015-05-12 08:00,2015-05-25 16:00,2015-05-12 08:00,2015-05-25 16:00,2015-06-01 08:00,2015-06-12 16:00,,PT_Normal,,,,,SOkgm1Foj06XPF0u4Xi0rA,FLpk6ZLBWUSA6V8JCgTMTQ,,,N,0,0,,,2014-04-05 12:27,2014-04-05 13:21,admin,admin,
650,140393,1749,36410,642,0,N,N,N,CP_Drtn,TT_Task,DT_FixedDUR2,TK_NotStart,BL3-MEP-AC-3F-2000,Duct Installation and Insulation,4454,112,0,168,0,263,263,168,4350.939473,0,4350.939473,,,,2015-06-14 08:00,2015-07-04 16:00,,2015-05-31 08:00,2015-06-20 16:00,2015-05-31 08:00,2015-06-20 16:00,2015-05-31 08:00,2015-06-20 16:00,2015-06-14 08:00,2015-07-04 16:00,,PT_Normal,,,,,NEZHsAIbq0+zzzxIBtF4FA,5kM/ejYUG0e7EOxuUw7qVw,,,N,0,0,,,2014-04-05 12:27,2014-04-05 13:21,admin,admin,
651,140394,1749,36410,642,0,N,N,N,CP_Drtn,TT_Task,DT_FixedDUR2,TK_NotStart,BL3-MEP-AC-3F-2030,Duct Accessories Installation,4457,400,56,112,0,448,448,112,666.965527,0,666.965527,,,,2015-08-10 08:00,2015-08-23 16:00,,2015-06-21 08:00,2015-07-04 16:00,2015-06-21 08:00,2015-07-04 16:00,2015-06-21 08:00,2015-07-04 16:00,2015-08-10 08:00,2015-08-23 16:00,,PT_Normal,,,,,cv3EfhFhzki5nLoDVogppw,IG50m1J5L0SXgb0hU+TRGA,,,N,0,0,,,2014-04-05 12:27,2014-04-05 13:21,admin,admin,
652,140395,1749,36410,642,0,N,N,N,CP_Drtn,TT_Task,DT_FixedDUR2,TK_NotStart,BL3-MEP-AC-3F-2010,FCU's Installation,4457,480,88,64,0,192,192,64,6000.055155,0,6000.055155,,,,2015-08-07 08:00,2015-08-14 16:00,,2015-06-08 08:00,2015-06-15 16:00,2015-06-08 08:00,2015-06-15 16:00,2015-06-08 08:00,2015-06-15 16:00,2015-08-07 08:00,2015-08-14 16:00,,PT_Normal,,,,,Arf/+YWP5US6nseQ/0XVww,U07WyI0s5UizbcYxzekkow,,,N,0,0,,,2014-04-05 12:27,2014-04-05 13:21,admin,admin,
653,140396,1749,36410,642,0,N,N,N,CP_Drtn,TT_Task,DT_FixedDUR2,TK_NotStart,BL3-MEP-AC-3F-2020,Chilled Water Pipes and Fittings Installation,4457,104,0,168,0,840,840,168,5251.194852,0,5251.194852,,,,2015-06-13 08:00,2015-07-03 16:00,,2015-05-31 08:00,2015-06-20 16:00,2015-05-31 08:00,2015-06-20 16:00,2015-05-31 08:00,2015-06-20 16:00,2015-06-13 08:00,2015-07-03 16:00,,PT_Normal,,,,,aGFJubfd+kqIec3iC7HTLQ,Ad4RHUbDcUyRCdcEeHl3Kg,,,N,0,0,,,2014-04-05 12:27,2014-04-05 13:21,admin,admin,
654,140397,1749,36410,642,0,N,N,N,CP_Drtn,TT_Task,DT_FixedDUR2,TK_NotStart,BL3-MEP-AC-3F-2040,Chilled Water Pipes Pressure Test,4457,392,0,48,0,96,96,48,587.116683,0,587.116683,,,,2015-08-09 08:00,2015-08-14 16:00,,2015-06-21 08:00,2015-06-26 16:00,2015-06-21 08:00,2015-06-26 16:00,2015-06-21 08:00,2015-06-26 16:00,2015-08-09 08:00,2015-08-14 16:00,,PT_Normal,,,,,oaLIhRal9kCMZELmotCAJA,mOvsDrtypUKA/fkqRlCuUw,,,N,0,0,,,2014-04-05 12:27,2014-04-05 13:21,admin,admin,
655,140398,1749,36410,642,0,N,N,N,CP_Drtn,TT_Task,DT_FixedDUR2,TK_NotStart,BL3-MEP-AC-3F-2050,Chilled Water Pipes Insulation,4457,1080,72,96,0,384,384,96,1670.208495,0,1670.208495,,,,2015-11-09 08:00,2015-11-20 16:00,,2015-06-27 08:00,2015-07-08 16:00,2015-06-27 08:00,2015-07-08 16:00,2015-06-27 08:00,2015-07-08 16:00,2015-11-09 08:00,2015-11-20 16:00,,PT_Normal,,,,,Grt5b573WEKdbfAPuL8ZYg,SVoh9ifJnE2nfGl9gDk0XA,,,N,0,0,,,2014-04-05 12:27,2014-04-05 13:21,admin,admin,
656,140399,1749,36410,642,0,N,N,N,CP_Drtn,TT_Task,DT_FixedDUR2,TK_NotStart,BL3-MEP-AC-3F-2060,Valve Package Installation,4457,392,0,48,0,96,96,48,2386.490429,0,2386.490429,,,,2015-08-15 08:00,2015-08-20 16:00,,2015-06-27 08:00,2015-07-02 16:00,2015-06-27 08:00,2015-07-02 16:00,2015-06-27 08:00,2015-07-02 16:00,2015-08-15 08:00,2015-08-20 16:00,,PT_Normal,,,,,QcN7m9GcVka7lZ0kiB2/jg,b5dfHrF6Ek6d9kTogkthmw,,,N,0,0,,,2014-04-05 12:27,2014-04-05 13:21,admin,admin,
657,140400,1749,36410,642,0,N,N,N,CP_Drtn,TT_Task,DT_FixedDUR2,TK_NotStart,BL3-MEP-AC-3F-2070,FCU's Drain Pipes Installation,4457,392,112,24,0,48,48,24,519.927167,0,519.927167,,,,2015-08-21 08:00,2015-08-23 16:00,,2015-07-03 08:00,2015-07-05 16:00,2015-07-03 08:00,2015-07-05 16:00,2015-07-03 08:00,2015-07-05 16:00,2015-08-21 08:00,2015-08-23 16:00,,PT_Normal,,,,,+WUM3bpt80KM7mkRhHKrtA,WDMVZdLM106t0Y9awZ52gg,,,N,0,0,,,2014-04-05 12:27,2014-04-05 13:21,admin,admin,
658,140401,1749,36620,642,0,N,N,N,CP_Drtn,TT_Task,DT_FixedDUR2,TK_NotStart,BL3-MEP-AC-3F-3000,Grills and Diffusers Fixing,,848,56,96,0,384,384,96,11550.608192,0,11550.608192,,,,2015-11-09 08:00,2015-11-20 16:00,,2015-07-26 08:00,2015-08-06 16:00,2015-07-26 08:00,2015-08-06 16:00,2015-07-26 08:00,2015-08-06 16:00,2015-11-09 08:00,2015-11-20 16:00,,PT_Normal,,,,,Ir051cfQTUuStvMNL9FDgA,NbnlfX0A30+naATWygpnVw,,,N,0,0,,,2014-04-05 12:27,2014-04-05 13:21,admin,admin,
659,140402,1749,36413,642,0,N,N,N,CP_Drtn,TT_Task,DT_FixedDUR2,TK_NotStart,BL3-MEP-PL-3F-1000,Low Level Water Supply Pipes Installation,,208,32,96,0,42,42,96,725.216846,0,725.216846,,,,2015-06-10 08:00,2015-06-21 16:00,,2015-05-12 08:00,2015-05-25 16:00,2015-05-12 08:00,2015-05-25 16:00,2015-05-12 08:00,2015-05-25 16:00,2015-06-10 08:00,2015-06-21 16:00,,PT_Normal,,,,,tkWPyNMKskK7qXsYjfLk0w,8VWuBYlYZkCaTl8BcEud+w,,,N,0,0,,,2014-04-05 12:27,2014-04-05 13:21,admin,admin,
660,140403,1749,36413,642,0,N,N,N,CP_Drtn,TT_Task,DT_FixedDUR2,TK_NotStart,BL3-MEP-PL-3F-1010,Low Level Drainage Pipes Installation,,208,32,96,0,12.67,12.67,96,2291.461713,0,2291.461713,,,,2015-06-10 08:00,2015-06-21 16:00,,2015-05-12 08:00,2015-05-25 16:00,2015-05-12 08:00,2015-05-25 16:00,2015-05-12 08:00,2015-05-25 16:00,2015-06-10 08:00,2015-06-21 16:00,,PT_Normal,,,,,tCYjyRZZ6k+dOBH727qv/A,+DMwyIzXHkCikuA8g/PI1A,,,N,0,0,,,2014-04-05 12:27,2014-04-05 13:21,admin,admin,
661,140404,1749,36413,642,0,N,N,N,CP_Drtn,TT_Task,DT_FixedDUR2,TK_NotStart,BL3-MEP-PL-3F-1020,Supports  installation for High level Pipes,,208,32,96,0,16.352,16.352,96,831.682549,0,831.682549,,,,2015-06-10 08:00,2015-06-21 16:00,,2015-05-12 08:00,2015-05-25 16:00,2015-05-12 08:00,2015-05-25 16:00,2015-05-12 08:00,2015-05-25 16:00,2015-06-10 08:00,2015-06-21 16:00,,PT_Normal,,,,,8/VggOU4gkSZyBgr1WREcQ,bSA/3oz6yk6lATfXOYN5DA,,,N,0,0,,,2014-04-05 12:27,2014-04-05 13:21,admin,admin,
662,140405,1749,36624,642,0,N,N,N,CP_Drtn,TT_Task,DT_FixedDUR2,TK_NotStart,BL3-MEP-PL-3F-3000,Sanitary Ware Installation Including Connection,,328,0,112,0,383.862,383.862,112,4453.516455,0,4453.516455,,,,2015-10-05 08:00,2015-10-18 16:00,,2015-08-25 08:00,2015-09-07 16:00,2015-08-25 08:00,2015-09-07 16:00,2015-08-25 08:00,2015-09-07 16:00,2015-10-05 08:00,2015-10-18 16:00,,PT_Normal,,,,,lz0o+YqXQkq6kPrymv3UIQ,u22Uiib8mkS96vnkk/su/g,,,N,0,0,,,2014-04-05 12:27,2014-04-05 13:21,admin,admin,
663,140406,1749,36624,642,0,N,N,N,CP_Drtn,TT_Task,DT_FixedDUR2,TK_NotStart,BL3-MEP-PL-3F-3010,Sanitary Ware Accessories Installation,,776,104,48,0,36.45,36.45,48,166.215378,0,166.215378,,,,2015-12-14 08:00,2015-12-19 16:00,,2015-09-08 08:00,2015-09-13 16:00,2015-09-08 08:00,2015-09-13 16:00,2015-09-08 08:00,2015-09-13 16:00,2015-12-14 08:00,2015-12-19 16:00,,PT_Normal,,,,,uFcPpLiYvEGRzcwl3+iCFw,5nF6X55O0Uigf8NSLjbkfw,,,N,0,0,,,2014-04-05 12:27,2014-04-05 13:21,admin,admin,
664,140407,1749,36626,642,0,N,N,N,CP_Drtn,TT_Task,DT_FixedDUR2,TK_NotStart,BL3-MEP-FF-3F-3000,Fire Extinguisher Installation,,240,32,16,0,8,8,16,1076.993507,0,1076.993507,,,,2016-01-25 08:00,2016-01-26 16:00,,2015-12-26 08:00,2015-12-27 16:00,2015-12-26 08:00,2015-12-27 16:00,2015-12-26 08:00,2015-12-27 16:00,2016-01-25 08:00,2016-01-26 16:00,,PT_Normal,,,,,ip9JBlaC8UaxzHE270+OIg,Sq6V4Z++V0G+1XD2keZh3A,,,N,0,0,,,2014-04-05 12:27,2014-04-05 13:21,admin,admin,
665,140408,1749,36626,642,0,N,N,N,CP_Drtn,TT_Task,DT_FixedDUR2,TK_NotStart,BL3-MEP-FF-3F-3010,Hose reel Cabinet Installation and Connection,,48,0,48,0,192,192,48,1336.852298,0,1336.852298,,,,2015-12-31 08:00,2016-01-05 16:00,,2015-12-25 08:00,2015-12-30 16:00,2015-12-25 08:00,2015-12-30 16:00,2015-12-25 08:00,2015-12-30 16:00,2015-12-31 08:00,2016-01-05 16:00,,PT_Normal,,,,,sSpuS/yQykqlTXEhLnkRfQ,/lItgJuQgEmJZCBZaYqxVQ,,,N,0,0,,,2014-04-05 12:27,2014-04-05 13:21,admin,admin,
666,140409,1749,36270,642,0,N,N,N,CP_Drtn,TT_Task,DT_FixedDUR2,TK_NotStart,BL3-MEP-EL-3F-1000,PVC Back Boxes and Conduits  Fixing in Wall,,56,0,176,0,384,384,176,3329.67233,0,3329.67233,,,,2015-05-13 08:00,2015-06-06 16:00,,2015-05-05 08:00,2015-05-30 16:00,2015-05-05 08:00,2015-05-30 16:00,2015-05-05 08:00,2015-05-30 16:00,2015-05-13 08:00,2015-06-06 16:00,,PT_Normal,,,,,kCqP+QfX5k+/oM5VeMFtKQ,t955WSLBbEu1tHbv23XNbA,,,N,0,0,,,2014-04-05 12:27,2014-04-05 13:21,admin,admin,
667,140410,1749,36270,642,0,N,N,N,CP_Drtn,TT_Task,DT_FixedDUR2,TK_NotStart,BL3-MEP-EL-3F-1010,DB's Inclosure Fixing,4455,240,96,48,0,96,96,48,2136.399392,0,2136.399392,,,,2015-06-20 08:00,2015-06-25 16:00,,2015-05-19 08:00,2015-05-25 16:00,2015-05-19 08:00,2015-05-25 16:00,2015-05-19 08:00,2015-05-25 16:00,2015-06-20 08:00,2015-06-25 16:00,,PT_Normal,,,,,UBThrl0Uv0m8aDznLPeDRA,eax97xJf1UWUzsQXM2s3hw,,,N,0,0,,,2014-04-05 12:27,2014-04-05 13:21,admin,admin,
668,140411,1749,36220,642,0,N,N,N,CP_Drtn,TT_Task,DT_FixedDUR2,TK_NotStart,BL3-MEP-EL-B1-2070,"SMDB's , MDB's  Installation",,568,120,96,0,336,336,96,4208.598932,0,4208.598932,,,,2015-06-13 08:00,2015-06-24 16:00,,2015-03-24 08:00,2015-04-06 16:00,2015-03-24 08:00,2015-04-06 16:00,2015-03-24 08:00,2015-04-06 16:00,2015-06-13 08:00,2015-06-24 16:00,,PT_Normal,,,,,GvHxObCiIkyEA0XrupbfGw,Fjd/BsUOFEugFE0rUoLsNg,,,N,0,0,,,2014-04-05 12:27,2014-04-05 13:21,admin,admin,
669,140412,1749,36220,642,0,N,N,N,CP_Drtn,TT_Task,DT_FixedDUR2,TK_NotStart,BL3-MEP-EL-B1-2040,BMS System Wiring,,824,376,64,0,186,186,64,15191.435697,0,15191.435697,,,,2015-06-17 08:00,2015-06-24 16:00,,2015-02-19 08:00,2015-02-28 16:00,2015-02-19 08:00,2015-02-28 16:00,2015-02-19 08:00,2015-02-28 16:00,2015-06-17 08:00,2015-06-24 16:00,,PT_Normal,,,,,gW8jtNM1hUGJRCNo+ygAkA,wYuDdR6BPkqDEpb4s0cYCw,,,N,0,0,,,2014-04-05 12:27,2014-04-05 13:21,admin,admin,
670,140413,1749,36220,642,0,N,N,N,CP_Drtn,TT_Task,DT_FixedDUR2,TK_NotStart,BL3-MEP-EL-B1-2020,Lighting  Wiring,,824,184,96,0,241.713,241.713,96,3578.08423,0,3578.08423,,,,2015-06-13 08:00,2015-06-24 16:00,,2015-02-15 08:00,2015-02-28 16:00,2015-02-15 08:00,2015-02-28 16:00,2015-02-15 08:00,2015-02-28 16:00,2015-06-13 08:00,2015-06-24 16:00,,PT_Normal,,,,,CtEBVhYMvEiOgsKx2CFZog,VuFXL8AS6kqR0GKmzlqNJQ,,,N,0,0,,,2014-04-05 12:27,2014-04-05 13:21,admin,admin,
671,140414,1749,36220,642,0,N,N,N,CP_Drtn,TT_Task,DT_FixedDUR2,TK_NotStart,BL3-MEP-EL-B1-2030,Power Points Wiring,,824,184,96,0,192,192,96,2906.213289,0,2906.213289,,,,2015-06-13 08:00,2015-06-24 16:00,,2015-02-15 08:00,2015-02-28 16:00,2015-02-15 08:00,2015-02-28 16:00,2015-02-15 08:00,2015-02-28 16:00,2015-06-13 08:00,2015-06-24 16:00,,PT_Normal,,,,,5bQE7tM/3UaH5p+MDcbkMg,NFtP34Ib9EyVjAKbh2kDNQ,,,N,0,0,,,2014-04-05 12:27,2014-04-05 13:21,admin,admin,
672,140415,1749,36220,642,0,N,N,N,CP_Drtn,TT_Task,DT_FixedDUR2,TK_NotStart,BL3-MEP-EL-B1-2000,Cable Tray and Trunking Installation,,824,168,168,0,336,336,168,9085.448617,0,9085.448617,,,,2015-06-04 08:00,2015-06-24 16:00,,2015-02-04 08:00,2015-02-28 16:00,2015-02-04 08:00,2015-02-28 16:00,2015-02-04 08:00,2015-02-28 16:00,2015-06-04 08:00,2015-06-24 16:00,,PT_Normal,,,,,vOXviFGgFU+CYE+AEK/fZA,Uk+Mc5iMXkuRxUiDqUKqHA,,,N,0,0,,,2014-04-05 12:27,2014-04-05 13:21,admin,admin,
673,140416,1749,36220,642,0,N,N,N,CP_Drtn,TT_Task,DT_FixedDUR2,TK_NotStart,BL3-MEP-EL-B1-2050,Emergency Light Wiring,,824,216,64,0,128,128,64,1210.028798,0,1210.028798,,,,2015-06-17 08:00,2015-06-24 16:00,,2015-02-19 08:00,2015-02-28 16:00,2015-02-19 08:00,2015-02-28 16:00,2015-02-19 08:00,2015-02-28 16:00,2015-06-17 08:00,2015-06-24 16:00,,PT_Normal,,,,,yyY3ubGNDk28jy5XNMPxlA,f6haIlP0G069nNByt2P91A,,,N,0,0,,,2014-04-05 12:27,2014-04-05 13:21,admin,admin,
674,140417,1749,36220,642,0,N,N,N,CP_Drtn,TT_Task,DT_FixedDUR2,TK_NotStart,BL3-MEP-EL-B1-2010,Fire Alarm System Wiring,,824,184,96,0,192,192,96,7123.009694,0,7123.009694,,,,2015-06-13 08:00,2015-06-24 16:00,,2015-02-15 08:00,2015-02-28 16:00,2015-02-15 08:00,2015-02-28 16:00,2015-02-15 08:00,2015-02-28 16:00,2015-06-13 08:00,2015-06-24 16:00,,PT_Normal,,,,,Sg4uG2lXHUGvoUEhXy0KqA,kedqI/ZVqkmn1lXEQyvd+A,,,N,0,0,,,2014-04-05 12:27,2014-04-05 13:21,admin,admin,
675,140418,1749,36220,642,0,N,N,N,CP_Drtn,TT_Task,DT_FixedDUR2,TK_NotStart,BL3-MEP-EL-B1-2060,DB's Installation and Termination,4455,568,0,96,0,288,288,96,4982.925025,0,4982.925025,,,,2015-06-13 08:00,2015-06-24 16:00,,2015-03-24 08:00,2015-04-06 16:00,2015-03-24 08:00,2015-04-06 16:00,2015-03-24 08:00,2015-04-06 16:00,2015-06-13 08:00,2015-06-24 16:00,,PT_Normal,,,,,FGIiDM2kQUmJarezPHREtA,XXnFtF1BRk6MdpB8mVGA1A,,,N,0,0,,,2014-04-05 12:27,2014-04-05 13:21,admin,admin,
676,140419,1749,36313,642,0,N,N,N,CP_Drtn,TT_Task,DT_FixedDUR2,TK_NotStart,BL3-MEP-EL-B1-1000,PVC Back Boxes and Conduits  Fixing in Wall,,152,80,96,0,384,384,96,3319.67233,0,3319.67233,,,,2015-02-11 08:00,2015-02-24 16:00,,2015-01-20 08:00,2015-02-02 16:00,2015-01-20 08:00,2015-02-02 16:00,2015-01-20 08:00,2015-02-02 16:00,2015-02-11 08:00,2015-02-24 16:00,,PT_Normal,,,,,6bG9yHUAqEG93maix4/ifw,XWo8nEZVT0mzX1C2FW+Qwg,,,N,0,0,,,2014-04-05 12:27,2014-04-05 13:21,admin,admin,
677,140420,1749,36313,642,0,N,N,N,CP_Drtn,TT_Task,DT_FixedDUR2,TK_NotStart,BL3-MEP-EL-B1-1010,DB's Inclosure Fixing,4455,344,112,48,0,96,96,48,2136.399392,0,2136.399392,,,,2015-03-18 08:00,2015-03-24 16:00,,2015-01-27 08:00,2015-02-02 16:00,2015-01-27 08:00,2015-02-02 16:00,2015-01-27 08:00,2015-02-02 16:00,2015-03-18 08:00,2015-03-24 16:00,,PT_Normal,,,,,mKf93LzH4E+DX8mDtYTwFg,4wY1077phEa5lk7JhNvNGQ,,,N,0,0,,,2014-04-05 12:27,2014-04-05 13:21,admin,admin,
678,140421,1749,36222,642,0,N,N,N,CP_Drtn,TT_Task,DT_FixedDUR2,TK_NotStart,BL3-MEP-EL-B1-3000,Lights Fitting Fixing,,832,144,112,0,244,244,112,7336.659378,0,7336.659378,,,,2015-08-18 08:00,2015-08-31 16:00,,2015-05-02 08:00,2015-05-17 16:00,2015-05-02 08:00,2015-05-17 16:00,2015-05-02 08:00,2015-05-17 16:00,2015-08-18 08:00,2015-08-31 16:00,,PT_Normal,,,,,JpiDjAh+OkC5AQFpValz1w,pfXXxpe8L0KjP+bgkRMkyA,,,N,0,0,,,2014-04-05 12:27,2014-04-05 13:21,admin,admin,
679,140422,1749,36222,642,0,N,N,N,CP_Drtn,TT_Task,DT_FixedDUR2,TK_NotStart,BL3-MEP-EL-B1-3050,Sockets and Switches Fixing,,1456,192,64,0,128,128,64,1174.957134,0,1174.957134,,,,2015-11-04 08:00,2015-11-11 16:00,,2015-05-02 08:00,2015-05-10 16:00,2015-05-02 08:00,2015-05-10 16:00,2015-05-02 08:00,2015-05-10 16:00,2015-11-04 08:00,2015-11-11 16:00,,PT_Normal,,,,,nLf2EP+1pUeg+35eexQ+qA,3YA8FtHlz0uqdaF7yaworw,,,N,0,0,,,2014-04-05 12:27,2014-04-05 13:21,admin,admin,
680,140423,1749,36222,642,0,N,N,N,CP_Drtn,TT_Task,DT_FixedDUR2,TK_NotStart,BL3-MEP-EL-B1-3010,Emergency Light Fixing,,1496,192,64,0,128,128,64,5722.024623,0,5722.024623,,,,2015-11-09 08:00,2015-11-16 16:00,,2015-05-02 08:00,2015-05-10 16:00,2015-05-02 08:00,2015-05-10 16:00,2015-05-02 08:00,2015-05-10 16:00,2015-11-09 08:00,2015-11-16 16:00,,PT_Normal,,,,,lpzr2gIjl0eJswcuCUFmtA,sGz7mFpiaU+AnGMyjkzKrg,,,N,0,0,,,2014-04-05 12:27,2014-04-05 13:21,admin,admin,
681,140424,1749,36222,642,0,N,N,N,CP_Drtn,TT_Task,DT_FixedDUR2,TK_NotStart,BL3-MEP-EL-B1-3020,CO2 System Installation,,456,408,48,0,179.65,179.65,48,21033.761938,0,21033.761938,,,,2016-02-06 08:00,2016-02-11 16:00,,2015-12-11 08:00,2015-12-16 16:00,2015-12-11 08:00,2015-12-16 16:00,2015-12-11 08:00,2015-12-16 16:00,2016-02-06 08:00,2016-02-11 16:00,,PT_Normal,,,,,EZCYcDKWUkyTuWgBaFvBCw,ctPnNv4BbUaLMY/ywOS/Rg,,,N,0,0,,,2014-04-05 12:27,2014-04-05 13:21,admin,admin,
682,140425,1749,36222,642,0,N,N,N,CP_Drtn,TT_Task,DT_FixedDUR2,TK_NotStart,BL3-MEP-EL-B1-3030,Fire Alarm System Detector Installation,,1040,160,96,0,192,192,96,4046.378277,0,4046.378277,,,,2015-09-13 08:00,2015-09-24 16:00,,2015-05-02 08:00,2015-05-14 16:00,2015-05-02 08:00,2015-05-14 16:00,2015-05-02 08:00,2015-05-14 16:00,2015-09-13 08:00,2015-09-24 16:00,,PT_Normal,,,,,2PgDeYx33E+NtKcMLZPGLw,Dz+EmY/XUE6X0/5E44mFTA,,,N,0,0,,,2014-04-05 12:27,2014-04-05 13:21,admin,admin,
683,140426,1749,36222,642,0,N,N,N,CP_Drtn,TT_Task,DT_FixedDUR2,TK_NotStart,BL3-MEP-EL-B1-3060,"SMDB's  , MDB's Termination and Final Connection",,1608,160,96,0,384,384,96,20737.637079,0,20737.637079,,,,2015-11-23 08:00,2015-12-04 16:00,,2015-05-02 08:00,2015-05-14 16:00,2015-05-02 08:00,2015-05-14 16:00,2015-05-02 08:00,2015-05-14 16:00,2015-11-23 08:00,2015-12-04 16:00,,PT_Normal,,,,,fZtLVgWIeUygkde5AoLHpw,YSOKtwJ6XEK2mNPaL13PlA,,,N,0,0,,,2014-04-05 12:27,2014-04-05 13:21,admin,admin,
684,140427,1749,36220,642,0,N,N,N,CP_Drtn,TT_Task,DT_FixedDUR2,TK_NotStart,BL3-MEP-EL-B1-3040,Power Cable Puling,,952,56,112,0,168,168,112,13646.333768,0,13646.333768,,,,2015-08-12 08:00,2015-08-25 16:00,,2015-04-07 08:00,2015-04-22 16:00,2015-04-07 08:00,2015-04-22 16:00,2015-04-07 08:00,2015-04-22 16:00,2015-08-12 08:00,2015-08-25 16:00,,PT_Normal,,,,,67w3Gk4fg0i8BL8x0L/nJw,7IG5OdXEq0mKhC0/aUwRsg,,,N,0,0,,,2014-04-05 12:27,2014-04-05 13:21,admin,admin,
685,140428,1749,36643,642,0,N,N,N,CP_Drtn,TT_Task,DT_FixedDUR2,TK_NotStart,BL3-MEP-AC-B1-1000,Supports and Hungers Fixing,,240,8,96,0,192,192,96,130.114912,0,130.114912,,,,2015-02-24 08:00,2015-03-09 16:00,,2015-01-20 08:00,2015-02-02 16:00,2015-01-20 08:00,2015-02-02 16:00,2015-01-20 08:00,2015-02-02 16:00,2015-02-24 08:00,2015-03-09 16:00,,PT_Normal,,,,,o4roc4nrbUSjoDRmbcSZ7A,9WGe5a15+U+ZKyT+Gc031A,,,N,0,0,,,2014-04-05 12:27,2014-04-05 13:21,admin,admin,
686,140429,1749,36644,642,0,N,N,N,CP_Drtn,TT_Task,DT_FixedDUR2,TK_NotStart,BL3-MEP-AC-B1-2000,Fresh Air Duct and Extract Duct Installation,4454,232,0,168,0,1008,1008,168,2029.377292,0,2029.377292,,,,2015-03-10 08:00,2015-04-02 16:00,,2015-02-04 08:00,2015-02-28 16:00,2015-02-04 08:00,2015-02-28 16:00,2015-02-04 08:00,2015-02-28 16:00,2015-03-10 08:00,2015-04-02 16:00,,PT_Normal,,,,,NMW4D7jHGUODQWt3uB3UNw,KJAoRNbfMUG3tARgkyhNWA,,,N,0,0,,,2014-04-05 12:27,2014-04-05 13:21,admin,admin,
687,140430,1749,36644,642,0,N,N,N,CP_Drtn,TT_Task,DT_FixedDUR2,TK_NotStart,BL3-MEP-AC-B1-2010,Duct Accessories Installation,4457,712,168,112,0,448,448,112,250.167804,0,250.167804,,,,2015-06-11 08:00,2015-06-24 16:00,,2015-03-01 08:00,2015-03-16 16:00,2015-03-01 08:00,2015-03-16 16:00,2015-03-01 08:00,2015-03-16 16:00,2015-06-11 08:00,2015-06-24 16:00,,PT_Normal,,,,,RoCGzhdfY0OV1msdhfnzAA,8UG/JGnk+0SytqEG0DqcYA,,,N,0,0,,,2014-04-05 12:27,2014-04-05 13:21,admin,admin,
688,140431,1749,36645,642,0,N,N,N,CP_Drtn,TT_Task,DT_FixedDUR2,TK_NotStart,BL3-MEP-AC-B1-3000,Grills and Diffusers Fixing,,1056,104,80,0,320,320,80,426.81116,0,426.81116,,,,2015-09-24 08:00,2015-10-03 16:00,,2015-05-12 08:00,2015-05-23 16:00,2015-05-12 08:00,2015-05-23 16:00,2015-05-12 08:00,2015-05-23 16:00,2015-09-24 08:00,2015-10-03 16:00,,PT_Normal,,,,,YRkBfSMiZUqyaPpn+PTNVg,uRQSpc/+bUSwIPWqgwenQg,,,N,0,0,,,2014-04-05 12:27,2014-04-05 13:21,admin,admin,
689,140432,1749,36438,642,0,N,N,N,CP_Drtn,TT_Task,DT_FixedDUR2,TK_NotStart,BL3-MEP-FF-B1-1000,Supports  and Hungers installation,,616,0,192,0,288,288,192,59.857235,0,59.857235,,,,2015-04-30 08:00,2015-05-27 16:00,,2015-01-31 08:00,2015-02-26 16:00,2015-01-31 08:00,2015-02-26 16:00,2015-01-31 08:00,2015-02-26 16:00,2015-04-30 08:00,2015-05-27 16:00,,PT_Normal,,,,,uIaNibzQikit3bgFqRhagw,fCYP1yG+aECz45/2LISHLw,,,N,0,0,,,2014-04-05 12:27,2014-04-05 13:21,admin,admin,
690,140433,1749,36439,642,0,N,N,N,CP_Drtn,TT_Task,DT_FixedDUR2,TK_NotStart,BL3-MEP-FF-B1-2000,Fire Fighting Pipes and Fittings Installation,,616,0,168,0,1008,1008,168,307.83721,0,307.83721,,,,2015-05-28 08:00,2015-06-18 16:00,,2015-02-28 08:00,2015-03-23 16:00,2015-02-28 08:00,2015-03-23 16:00,2015-02-28 08:00,2015-03-23 16:00,2015-05-28 08:00,2015-06-18 16:00,,PT_Normal,,,,,RhalpNVDzkGADGAoOGjSiw,4BADMOzTAUeo+b0HSlvA7g,,,N,0,0,,,2014-04-05 12:27,2014-04-05 13:21,admin,admin,
691,140434,1749,36439,642,0,N,N,N,CP_Drtn,TT_Task,DT_FixedDUR2,TK_NotStart,BL3-MEP-FF-B1-2010,Fire Fighting Pipes Pressure Test,,616,168,48,0,96,96,48,41.857235,0,41.857235,,,,2015-06-19 08:00,2015-06-24 16:00,,2015-03-24 08:00,2015-03-30 16:00,2015-03-24 08:00,2015-03-30 16:00,2015-03-24 08:00,2015-03-30 16:00,2015-06-19 08:00,2015-06-24 16:00,,PT_Normal,,,,,ossYD9v900+qEi/HTtfQSQ,cVlBQ7FpCEajUXoTowX6Hw,,,N,0,0,,,2014-04-05 12:27,2014-04-05 13:21,admin,admin,
692,140435,1749,36440,642,0,N,N,N,CP_Drtn,TT_Task,DT_FixedDUR2,TK_NotStart,BL3-MEP-FF-B1-3000,Fire Extinguisher Installation,,368,32,16,0,8,8,16,1076.993507,0,1076.993507,,,,2016-01-17 08:00,2016-01-18 16:00,,2015-12-02 08:00,2015-12-03 16:00,2015-12-02 08:00,2015-12-03 16:00,2015-12-02 08:00,2015-12-03 16:00,2016-01-17 08:00,2016-01-18 16:00,,PT_Normal,,,,,pyxtRl2wbUWpmmQtL2ISKg,dik5QI/6VUmhRJxqqGpFCg,,,N,0,0,,,2014-04-05 12:27,2014-04-05 13:21,admin,admin,
693,140436,1749,36440,642,0,N,N,N,CP_Drtn,TT_Task,DT_FixedDUR2,TK_NotStart,BL3-MEP-FF-B1-3010,Hose reel Cabinet Installation and Connection,,48,0,48,0,192,192,48,1336.852298,0,1336.852298,,,,2015-12-07 08:00,2015-12-12 16:00,,2015-12-01 08:00,2015-12-06 16:00,2015-12-01 08:00,2015-12-06 16:00,2015-12-01 08:00,2015-12-06 16:00,2015-12-07 08:00,2015-12-12 16:00,,PT_Normal,,,,,eOOIcCIuxEuqhwkOUCWtbg,4akfKsa4PUemuFaPyCj7gQ,,,N,0,0,,,2014-04-05 12:27,2014-04-05 13:21,admin,admin,
694,140437,1749,36442,642,0,N,N,N,CP_Drtn,TT_Task,DT_FixedDUR2,TK_NotStart,BL3-MEP-PL-B1-3010,Sanitary Ware Installation Including Connection,,544,0,96,0,383.862,383.862,96,4451.516455,0,4451.516455,,,,2015-08-12 08:00,2015-08-23 16:00,,2015-06-05 08:00,2015-06-16 16:00,2015-06-05 08:00,2015-06-16 16:00,2015-06-05 08:00,2015-06-16 16:00,2015-08-12 08:00,2015-08-23 16:00,,PT_Normal,,,,,vg2qoe9bo0+oifVxYB3nwg,no2nx6Hcx0yEfLP+8lh0rQ,,,N,0,0,,,2014-04-05 12:27,2014-04-05 13:21,admin,admin,
695,140438,1749,36442,642,0,N,N,N,CP_Drtn,TT_Task,DT_FixedDUR2,TK_NotStart,BL3-MEP-PL-B1-3020,Sanitary Ware Accessories Installation,,1248,224,48,0,36.45,36.45,48,166.215378,0,166.215378,,,,2015-11-20 08:00,2015-11-25 16:00,,2015-06-17 08:00,2015-06-22 16:00,2015-06-17 08:00,2015-06-22 16:00,2015-06-17 08:00,2015-06-22 16:00,2015-11-20 08:00,2015-11-25 16:00,,PT_Normal,,,,,Kh3Ss4KK0EC2qL314NsSMQ,Lp6GT3GTE02DP7lcIqxHmQ,,,N,0,0,,,2014-04-05 12:27,2014-04-05 13:21,admin,admin,
696,140439,1749,36443,642,0,N,N,N,CP_Drtn,TT_Task,DT_FixedDUR2,TK_NotStart,BL3-MEP-PL-B1-3000,Manhole Covers  Installation,,2144,2056,48,0,37.5,37.5,48,494.574212,0,494.574212,,,,2016-01-30 08:00,2016-02-04 16:00,,2015-05-03 08:00,2015-05-09 16:00,2015-05-03 08:00,2015-05-09 16:00,2015-05-03 08:00,2015-05-09 16:00,2016-01-30 08:00,2016-02-04 16:00,,PT_Normal,,,,,3ntg9/oMRkaujQpbKZXy6g,NiYb9lAmOE+sq83T4ksaIQ,,,N,0,0,,,2014-04-05 12:27,2014-04-05 13:21,admin,admin,
697,140440,1749,36443,642,0,N,N,N,CP_Drtn,TT_Task,DT_FixedDUR2,TK_NotStart,BL3-MEP-PL-B1-2030,Parking Drain Installation,,1616,200,48,0,48,48,48,553.83323,0,553.83323,,,,2015-11-25 08:00,2015-11-30 16:00,,2015-05-03 08:00,2015-05-09 16:00,2015-05-03 08:00,2015-05-09 16:00,2015-05-03 08:00,2015-05-09 16:00,2015-11-25 08:00,2015-11-30 16:00,,PT_Normal,,,,,9EXMvejyrk62FJ7loUllvA,IY0Pjv0r1EWKLO2/FwVghQ,,,N,0,0,,,2014-04-05 12:27,2014-04-05 13:21,admin,admin,
698,140441,1749,36443,642,0,N,N,N,CP_Drtn,TT_Task,DT_FixedDUR2,TK_NotStart,BL3-MEP-PL-B1-2000,High Level Water Supply Pipes and Fittings Installation,,296,0,168,0,150.02,150.02,168,1329.597866,0,1329.597866,,,,2015-03-19 08:00,2015-04-12 16:00,,2015-02-04 08:00,2015-02-28 16:00,2015-02-04 08:00,2015-02-28 16:00,2015-02-04 08:00,2015-02-28 16:00,2015-03-19 08:00,2015-04-12 16:00,,PT_Normal,,,,,+aSGka5h/EGdVh1BFZp6OA,PIXc95OxW0m3Hmqiy9VKFw,,,N,0,0,,,2014-04-05 12:27,2014-04-05 13:21,admin,admin,
699,140442,1749,36443,642,0,N,N,N,CP_Drtn,TT_Task,DT_FixedDUR2,TK_NotStart,BL3-MEP-PL-B1-2010,High Level Drainage Pipes Installation,,296,0,168,0,244.38,244.38,168,6583.525267,0,6583.525267,,,,2015-03-19 08:00,2015-04-12 16:00,,2015-02-04 08:00,2015-02-28 16:00,2015-02-04 08:00,2015-02-28 16:00,2015-02-04 08:00,2015-02-28 16:00,2015-03-19 08:00,2015-04-12 16:00,,PT_Normal,,,,,uK+WIMzXEE6QGOlaKscx4g,aHGxgoi0tkWdClCZyNacYA,,,N,0,0,,,2014-04-05 12:27,2014-04-05 13:21,admin,admin,
700,140443,1749,36443,642,0,N,N,N,CP_Drtn,TT_Task,DT_FixedDUR2,TK_NotStart,BL3-MEP-PL-B1-2020,Water Supply Pipes Pressure Test,4456,776,232,48,0,48,48,48,151.744312,0,151.744312,,,,2015-06-19 08:00,2015-06-24 16:00,,2015-03-01 08:00,2015-03-07 16:00,2015-03-01 08:00,2015-03-07 16:00,2015-03-01 08:00,2015-03-07 16:00,2015-06-19 08:00,2015-06-24 16:00,,PT_Normal,,,,,ulmT09ISfEib1XGelmBiDQ,kzBLp//rB0qNb4cPF/FJ4w,,,N,0,0,,,2014-04-05 12:27,2014-04-05 13:21,admin,admin,
701,140444,1749,36443,642,0,N,N,N,CP_Drtn,TT_Task,DT_FixedDUR2,TK_NotStart,BL3-MEP-PL-B1-2040,Drainage Pipes Gravity Test,,776,232,48,0,48,48,48,826.240719,0,826.240719,,,,2015-06-19 08:00,2015-06-24 16:00,,2015-03-01 08:00,2015-03-07 16:00,2015-03-01 08:00,2015-03-07 16:00,2015-03-01 08:00,2015-03-07 16:00,2015-06-19 08:00,2015-06-24 16:00,,PT_Normal,,,,,D4j7XvN4f0mK5ZUN4jmsAw,fxS1XNrX10GVNlzNYZzUEA,,,N,0,0,,,2014-04-05 12:27,2014-04-05 13:21,admin,admin,
702,140445,1749,36485,642,0,N,N,N,CP_Drtn,TT_Task,DT_FixedDUR2,TK_NotStart,BL3-MEP-PL-B1-1000,Low Level Water Supply Pipes Installation,,304,8,96,0,42,42,96,725.216846,0,725.216846,,,,2015-03-05 08:00,2015-03-18 16:00,,2015-01-20 08:00,2015-02-02 16:00,2015-01-20 08:00,2015-02-02 16:00,2015-01-20 08:00,2015-02-02 16:00,2015-03-05 08:00,2015-03-18 16:00,,PT_Normal,,,,,MA94v+KaYkW0uLywUbZl+A,u1wW26tf/0WNXky+F2hjyQ,,,N,0,0,,,2014-04-05 12:27,2014-04-05 13:21,admin,admin,
703,140446,1749,36485,642,0,N,N,N,CP_Drtn,TT_Task,DT_FixedDUR2,TK_NotStart,BL3-MEP-PL-B1-1010,Low Level Drainage Pipes Installation,,304,8,96,0,12.67,12.67,96,94.429262,0,94.429262,,,,2015-03-05 08:00,2015-03-18 16:00,,2015-01-20 08:00,2015-02-02 16:00,2015-01-20 08:00,2015-02-02 16:00,2015-01-20 08:00,2015-02-02 16:00,2015-03-05 08:00,2015-03-18 16:00,,PT_Normal,,,,,+8miGsPI3EKU2pVG7MNaJQ,zdGbVHWlh0CBnoEcFOdMMQ,,,N,0,0,,,2014-04-05 12:27,2014-04-05 13:21,admin,admin,
704,140447,1749,36485,642,0,N,N,N,CP_Drtn,TT_Task,DT_FixedDUR2,TK_NotStart,BL3-MEP-PL-B1-1020,Supports  installation for High level Pipes,,304,8,96,0,16.352,16.352,96,831.682549,0,831.682549,,,,2015-03-05 08:00,2015-03-18 16:00,,2015-01-20 08:00,2015-02-02 16:00,2015-01-20 08:00,2015-02-02 16:00,2015-01-20 08:00,2015-02-02 16:00,2015-03-05 08:00,2015-03-18 16:00,,PT_Normal,,,,,khTTk3oI40ivUg04660blw,5G9zBp74iUOa6+5881+K0Q,,,N,0,0,,,2014-04-05 12:27,2014-04-05 13:21,admin,admin,
705,140448,1749,36133,642,0,N,N,N,CP_Drtn,TT_Task,DT_FixedDUR2,TK_NotStart,BL1-MEP-EL-B2-1000,PVC Back Boxes and Conduits  Fixing in Wall,,1148,96,96,0,384,384,96,3319.67233,0,3319.67233,,,,2015-03-09 12:00,2015-03-23 12:00,,2014-09-13 08:00,2014-09-25 16:00,2014-09-13 08:00,2014-09-25 16:00,2014-09-13 08:00,2014-09-25 16:00,2015-03-09 12:00,2015-03-23 12:00,,PT_Normal,,,,,Vj8pm9YQN0S7XMgfQMBSuw,/bmeiu7xHkOap98gyyGwhA,,,N,0,0,,,2014-04-05 12:27,2014-04-05 13:21,admin,admin,
706,140449,1749,36133,642,0,N,N,N,CP_Drtn,TT_Task,DT_FixedDUR2,TK_NotStart,BL1-MEP-EL-B2-1010,DB's Inclosure Fixing,4455,1196,168,48,0,96,96,48,2136.399392,0,2136.399392,,,,2015-03-23 12:00,2015-03-30 12:00,,2014-09-20 08:00,2014-09-25 16:00,2014-09-20 08:00,2014-09-25 16:00,2014-09-20 08:00,2014-09-25 16:00,2015-03-23 12:00,2015-03-30 12:00,,PT_Normal,,,,,sWt72uNGlUi/u9udtG3wBQ,HTWqbpJz80avoFQO9ImDFw,,,N,0,0,,,2014-04-05 12:27,2014-04-05 13:21,admin,admin,
707,140450,1749,36184,642,0,N,N,N,CP_Drtn,TT_Task,DT_FixedDUR2,TK_NotStart,BL1-MEP-EL-B2-3020,Lights Fitting Fixing,,1316,616,112,0,244,244,112,7336.659378,0,7336.659378,,,,2015-07-27 12:00,2015-08-10 12:00,,2015-01-26 08:00,2015-02-10 16:00,2015-01-26 08:00,2015-02-10 16:00,2015-01-26 08:00,2015-02-10 16:00,2015-07-27 12:00,2015-08-10 12:00,,PT_Normal,,,,,CxjuDnFu/ku9aBMnCLsO1A,pJ2r24ZCHEWQh16Hia98hg,,,N,0,0,,,2014-04-05 12:27,2014-04-05 13:21,admin,admin,
708,140451,1749,36184,642,0,N,N,N,CP_Drtn,TT_Task,DT_FixedDUR2,TK_NotStart,BL1-MEP-EL-B2-3040,Sockets and Switches Fixing,,1052,0,64,0,128,128,64,1174.957134,0,1174.957134,,,,2015-08-14 12:00,2015-08-22 12:00,,2015-03-26 08:00,2015-04-04 16:00,2015-03-26 08:00,2015-04-04 16:00,2015-03-26 08:00,2015-04-04 16:00,2015-08-14 12:00,2015-08-22 12:00,,PT_Normal,,,,,l9/QbuBKtkC8oBzEXwBNNw,dl4tuIlJZkugsI5fQbCVCg,,,N,0,0,,,2014-04-05 12:27,2014-04-05 13:21,admin,admin,
709,140452,1749,36184,642,0,N,N,N,CP_Drtn,TT_Task,DT_FixedDUR2,TK_NotStart,BL1-MEP-EL-B2-3030,Emergency Light Fixing,,1460,328,64,0,128,128,64,5722.024623,0,5722.024623,,,,2015-08-14 12:00,2015-08-22 12:00,,2015-01-26 08:00,2015-02-03 16:00,2015-01-26 08:00,2015-02-03 16:00,2015-01-26 08:00,2015-02-03 16:00,2015-08-14 12:00,2015-08-22 12:00,,PT_Normal,,,,,6oKukxk3KUWLdgLzWMYR5A,7tbt3NZUJ0mA73CevrmK6w,,,N,0,0,,,2014-04-05 12:27,2014-04-05 13:21,admin,admin,
710,140453,1749,36184,642,0,N,N,N,CP_Drtn,TT_Task,DT_FixedDUR2,TK_NotStart,BL1-MEP-EL-B2-3000,CO2 System Installation,,1520,0,48,0,179.65,179.65,48,21033.761938,0,21033.761938,,,,2016-01-07 08:00,2016-01-12 16:00,,2015-07-01 08:00,2015-07-06 16:00,2015-07-01 08:00,2015-07-06 16:00,2015-07-01 08:00,2015-07-06 16:00,2016-01-07 08:00,2016-01-12 16:00,,PT_Normal,,,,,sYeC4pJ1FESj9PaKAAOi2g,VJYQlc3nfkSpKJYeOPAkoA,,,N,0,0,,,2014-04-05 12:27,2014-04-05 13:21,admin,admin,
711,140454,1749,36184,642,0,N,N,N,CP_Drtn,TT_Task,DT_FixedDUR2,TK_NotStart,BL1-MEP-EL-B2-3010,Fire Alarm System Detector Installation,,1364,296,96,0,192,192,96,4046.378277,0,4046.378277,,,,2015-08-02 12:00,2015-08-14 12:00,,2015-01-26 08:00,2015-02-08 16:00,2015-01-26 08:00,2015-02-08 16:00,2015-01-26 08:00,2015-02-08 16:00,2015-08-02 12:00,2015-08-14 12:00,,PT_Normal,,,,,NY+IsPHqGUCkmJWXjenjfg,DX3la56c70eo96KuEL789A,,,N,0,0,,,2014-04-05 12:27,2014-04-05 13:21,admin,admin,
712,140455,1749,36184,642,0,N,N,N,CP_Drtn,TT_Task,DT_FixedDUR2,TK_NotStart,BL1-MEP-EL-B2-3060,SMDB's  Termination and Final Connection,,1460,344,48,0,192,192,48,2791.825001,0,2791.825001,,,,2015-08-14 12:00,2015-08-20 12:00,,2015-01-26 08:00,2015-02-01 16:00,2015-01-26 08:00,2015-02-01 16:00,2015-01-26 08:00,2015-02-01 16:00,2015-08-14 12:00,2015-08-20 12:00,,PT_Normal,,,,,ZiI+Ten1W06mneT1cvAp9A,dCfwS/X7SUWeMXpX6C+A2Q,,,N,0,0,,,2014-04-05 12:27,2014-04-05 13:21,admin,admin,
713,140456,1749,36244,642,0,N,N,N,CP_Drtn,TT_Task,DT_FixedDUR2,TK_NotStart,BL1-MEP-EL-B2-3050,Power Cable Puling,,1596,128,112,0,168,168,112,13646.333768,0,13646.333768,,,,2015-07-21 12:00,2015-08-04 12:00,,2014-12-07 08:00,2014-12-22 16:00,2014-12-07 08:00,2014-12-22 16:00,2014-12-07 08:00,2014-12-22 16:00,2015-07-21 12:00,2015-08-04 12:00,,PT_Normal,,,,,AiVLim4ep0iqSQc/robPqA,LfdPvhthP06P9mJKqPzn0g,,,N,0,0,,,2014-04-05 12:27,2014-04-05 13:21,admin,admin,
714,140457,1749,36244,642,0,N,N,N,CP_Drtn,TT_Task,DT_FixedDUR2,TK_NotStart,BL1-MEP-EL-B2-2070,SMDB's Installation,,1364,48,48,0,48,48,48,4976.925025,0,4976.925025,,,,2015-06-10 12:00,2015-06-16 12:00,,2014-11-23 08:00,2014-11-29 16:00,2014-11-23 08:00,2014-11-29 16:00,2014-11-23 08:00,2014-11-29 16:00,2015-06-10 12:00,2015-06-16 12:00,,PT_Normal,,,,,pmYh8ERHnESXG0l3xjDGwA,fspmyF6SRkygPHVxb2UgWg,,,N,0,0,,,2014-04-05 12:27,2014-04-05 13:21,admin,admin,
715,140458,1749,36244,642,0,N,N,N,CP_Drtn,TT_Task,DT_FixedDUR2,TK_NotStart,BL1-MEP-EL-B2-2040,BMS System Wiring,,1116,0,64,0,186,186,64,15191.435697,0,15191.435697,,,,2015-06-05 12:00,2015-06-13 12:00,,2014-12-23 08:00,2014-12-31 16:00,2014-12-23 08:00,2014-12-31 16:00,2014-12-23 08:00,2014-12-31 16:00,2015-06-05 12:00,2015-06-13 12:00,,PT_Normal,,,,,mDdJruektUe8i8ItvI/nag,V2GIEz2bLE6fGKWYk/XsPA,,,N,0,0,,,2014-04-05 12:27,2014-04-05 13:21,admin,admin,
716,140459,1749,36244,642,0,N,N,N,CP_Drtn,TT_Task,DT_FixedDUR2,TK_NotStart,BL1-MEP-EL-B2-2020,Lighting  Wiring,,1412,120,96,0,241.713,241.713,96,3578.08423,0,3578.08423,,,,2015-06-01 12:00,2015-06-13 12:00,,2014-11-05 08:00,2014-11-18 16:00,2014-11-05 08:00,2014-11-18 16:00,2014-11-05 08:00,2014-11-18 16:00,2015-06-01 12:00,2015-06-13 12:00,,PT_Normal,,,,,SIJ5+ROs0kC5n2w7Vv9mcg,nB+qn7+Uu06bXzu/azTkmA,,,N,0,0,,,2014-04-05 12:27,2014-04-05 13:21,admin,admin,
717,140460,1749,36244,642,0,N,N,N,CP_Drtn,TT_Task,DT_FixedDUR2,TK_NotStart,BL1-MEP-EL-B2-2030,Power Points Wiring,,1316,24,96,0,192,192,96,2906.213289,0,2906.213289,,,,2015-05-18 12:00,2015-06-01 12:00,,2014-11-05 08:00,2014-11-18 16:00,2014-11-05 08:00,2014-11-18 16:00,2014-11-05 08:00,2014-11-18 16:00,2015-05-18 12:00,2015-06-01 12:00,,PT_Normal,,,,,IRw05e3alUaek2/8wU7Lhg,jd++tYJ6jkC85S63nzKEeQ,,,N,0,0,,,2014-04-05 12:27,2014-04-05 13:21,admin,admin,
718,140461,1749,36244,642,0,N,N,N,CP_Drtn,TT_Task,DT_FixedDUR2,TK_NotStart,BL1-MEP-EL-B2-2000,Cable Tray and Trunking Installation,,1292,48,168,0,336,336,168,9085.448617,0,9085.448617,,,,2015-05-14 12:00,2015-06-07 12:00,,2014-11-05 08:00,2014-11-29 16:00,2014-11-05 08:00,2014-11-29 16:00,2014-11-05 08:00,2014-11-29 16:00,2015-05-14 12:00,2015-06-07 12:00,,PT_Normal,,,,,28+qKqRMOUaesCSo9we5+Q,hwg/7iJI1UyoNiUv7CvCtw,,,N,0,0,,,2014-04-05 12:27,2014-04-05 13:21,admin,admin,
719,140462,1749,36244,642,0,N,N,N,CP_Drtn,TT_Task,DT_FixedDUR2,TK_NotStart,BL1-MEP-EL-B2-2050,Emergency Light Wiring,,1444,176,64,0,128,128,64,1210.028798,0,1210.028798,,,,2015-06-05 12:00,2015-06-13 12:00,,2014-11-05 08:00,2014-11-13 16:00,2014-11-05 08:00,2014-11-13 16:00,2014-11-05 08:00,2014-11-13 16:00,2015-06-05 12:00,2015-06-13 12:00,,PT_Normal,,,,,dVhWIXy0uUar2F0WZQynYA,ZFhVtH47T0uQaGr+XwBuJw,,,N,0,0,,,2014-04-05 12:27,2014-04-05 13:21,admin,admin,
720,140463,1749,36244,642,0,N,N,N,CP_Drtn,TT_Task,DT_FixedDUR2,TK_NotStart,BL1-MEP-EL-B2-2010,Fire Alarm System Wiring,,1228,0,96,0,192,192,96,7123.009694,0,7123.009694,,,,2015-06-01 12:00,2015-06-13 12:00,,2014-12-02 08:00,2014-12-15 16:00,2014-12-02 08:00,2014-12-15 16:00,2014-12-02 08:00,2014-12-15 16:00,2015-06-01 12:00,2015-06-13 12:00,,PT_Normal,,,,,CoGUcn4kMke0dn+Yf0mx+A,mtIyue7wZkWr8QI1S+vnGw,,,N,0,0,,,2014-04-05 12:27,2014-04-05 13:21,admin,admin,
721,140464,1749,36244,642,0,N,N,N,CP_Drtn,TT_Task,DT_FixedDUR2,TK_NotStart,BL1-MEP-EL-B2-2060,DB's Installation and Termination,4455,1292,0,96,0,288,288,96,4982.925025,0,4982.925025,,,,2015-06-01 12:00,2015-06-13 12:00,,2014-11-23 08:00,2014-12-06 16:00,2014-11-23 08:00,2014-12-06 16:00,2014-11-23 08:00,2014-12-06 16:00,2015-06-01 12:00,2015-06-13 12:00,,PT_Normal,,,,,mvhRO9wiIUuTOocJ/NkAOQ,B7bfr1zldkyJuaPsshnH7A,,,N,0,0,,,2014-04-05 12:27,2014-04-05 13:21,admin,admin,
722,140465,1749,36329,642,0,N,N,N,CP_Drtn,TT_Task,DT_FixedDUR2,TK_NotStart,BL1-MEP-FF-B2-1000,Supports  and Hungers installation,,1388,96,96,0,288,288,96,47.857235,0,47.857235,,,,2015-04-23 12:00,2015-05-07 12:00,,2014-09-23 08:00,2014-10-11 16:00,2014-09-23 08:00,2014-10-11 16:00,2014-09-23 08:00,2014-10-11 16:00,2015-04-23 12:00,2015-05-07 12:00,,PT_Normal,,,,,PbjSHsHVIEC0sWGKUoTu/A,Gb1VXUK7U0uf6a+c/Uz0iA,,,N,0,0,,,2014-04-05 12:27,2014-04-05 13:21,admin,admin,
723,140466,1749,36330,642,0,N,N,N,CP_Drtn,TT_Task,DT_FixedDUR2,TK_NotStart,BL1-MEP-FF-B2-3000,Fire Extinguisher Installation,,2664,1144,16,0,383.862,383.862,16,7503.015271,0,7503.015271,,,,2016-01-01 08:00,2016-01-02 16:00,,2015-01-13 08:00,2015-01-14 16:00,2015-01-13 08:00,2015-01-14 16:00,2015-01-13 08:00,2015-01-14 16:00,2016-01-01 08:00,2016-01-02 16:00,,PT_Normal,,,,,rnhxcQ+/V0uMZMPwjDaxbQ,D9N/jEEkh0OdT6kMwavZqA,,,N,0,0,,,2014-04-05 12:27,2014-04-05 13:21,admin,admin,
724,140467,1749,36330,642,0,N,N,N,CP_Drtn,TT_Task,DT_FixedDUR2,TK_NotStart,BL1-MEP-FF-B2-3010,Hose reel Cabinet Installation and Connection,,484,0,48,0,37.5,37.5,48,1337.338113,0,1337.338113,,,,2015-08-20 12:00,2015-08-26 12:00,,2015-06-21 08:00,2015-06-26 16:00,2015-06-21 08:00,2015-06-26 16:00,2015-06-21 08:00,2015-06-26 16:00,2015-08-20 12:00,2015-08-26 12:00,,PT_Normal,,,,,FEvqC9AZRESJJEvfc3WetA,/zbmGVWyf0urC7rky1Z52g,,,N,0,0,,,2014-04-05 12:27,2014-04-05 13:21,admin,admin,
725,140468,1749,36347,642,0,N,N,N,CP_Drtn,TT_Task,DT_FixedDUR2,TK_NotStart,BL1-MEP-FF-B2-2000,Fire Fighting Pipes and Fittings Installation,,1004,0,168,0,1008,1008,168,307.83721,0,307.83721,,,,2015-05-07 12:00,2015-06-01 12:00,,2014-12-10 08:00,2015-01-05 16:00,2014-12-10 08:00,2015-01-05 16:00,2014-12-10 08:00,2015-01-05 16:00,2015-05-07 12:00,2015-06-01 12:00,,PT_Normal,,,,,OKtRg1v+nkGNjLioNDulrQ,0d+vnrqWd0KctWaJWCfVWQ,,,N,0,0,,,2014-04-05 12:27,2014-04-05 13:21,admin,admin,
726,140469,1749,36347,642,0,N,N,N,CP_Drtn,TT_Task,DT_FixedDUR2,TK_NotStart,BL1-MEP-FF-B2-2010,Fire Fighting Pipes Pressure Test,4456,1052,0,48,0,96,96,48,41.857235,0,41.857235,,,,2015-06-07 12:00,2015-06-13 12:00,,2015-01-06 08:00,2015-01-12 16:00,2015-01-06 08:00,2015-01-12 16:00,2015-01-06 08:00,2015-01-12 16:00,2015-06-07 12:00,2015-06-13 12:00,,PT_Normal,,,,,6k9vBELTuU++tMuVtmRHzA,EM3eUjO/oUOeE7ihMJnyQg,,,N,0,0,,,2014-04-05 12:27,2014-04-05 13:21,admin,admin,
727,140470,1749,36460,642,0,N,N,N,CP_Drtn,TT_Task,DT_FixedDUR2,TK_NotStart,BL1-MEP-AC-B2-1000,Supports and Hungers Fixing,,1204,96,96,0,192,192,96,130.114912,0,130.114912,,,,2015-03-28 12:00,2015-04-11 12:00,,2014-09-23 08:00,2014-10-11 16:00,2014-09-23 08:00,2014-10-11 16:00,2014-09-23 08:00,2014-10-11 16:00,2015-03-28 12:00,2015-04-11 12:00,,PT_Normal,,,,,t4c4ozwlu0+6zU9mynwlVw,la6UsFkxkUGnU2m63+8CwQ,,,N,0,0,,,2014-04-05 12:27,2014-04-05 13:21,admin,admin,
728,140471,1749,36461,642,0,N,N,N,CP_Drtn,TT_Task,DT_FixedDUR2,TK_NotStart,BL1-MEP-AC-B2-2000,Fresh Air Duct and Extract Duct Installation,4454,916,0,168,0,1008,1008,168,2029.377292,0,2029.377292,,,,2015-04-21 12:00,2015-05-16 12:00,,2014-12-07 08:00,2014-12-30 16:00,2014-12-07 08:00,2014-12-30 16:00,2014-12-07 08:00,2014-12-30 16:00,2015-04-21 12:00,2015-05-16 12:00,,PT_Normal,,,,,21kdeKWLcUy8dr+k5Rw/AQ,sxFPF5TQ3UuyaW39zvsybw,,,N,0,0,,,2014-04-05 12:27,2014-04-05 13:21,admin,admin,
729,140472,1749,36461,642,0,N,N,N,CP_Drtn,TT_Task,DT_FixedDUR2,TK_NotStart,BL1-MEP-AC-B2-2010,Duct Accessories Installation,4457,1012,0,112,0,448,448,112,250.167804,0,250.167804,,,,2015-05-30 12:00,2015-06-13 12:00,,2014-12-31 08:00,2015-01-18 16:00,2014-12-31 08:00,2015-01-18 16:00,2014-12-31 08:00,2015-01-18 16:00,2015-05-30 12:00,2015-06-13 12:00,,PT_Normal,,,,,BI9Qyv//fku2U/msVQzIIw,fQM9JDTZ2EOPsNLAfLZayg,,,N,0,0,,,2014-04-05 12:27,2014-04-05 13:21,admin,admin,
730,140473,1749,36462,642,0,N,N,N,CP_Drtn,TT_Task,DT_FixedDUR2,TK_NotStart,BL1-MEP-AC-B2-3000,Grills and Diffusers Fixing,,748,0,80,0,320,320,80,426.81116,0,426.81116,,,,2015-08-06 12:00,2015-08-16 12:00,,2015-04-30 08:00,2015-05-11 16:00,2015-04-30 08:00,2015-05-11 16:00,2015-04-30 08:00,2015-05-11 16:00,2015-08-06 12:00,2015-08-16 12:00,,PT_Normal,,,,,kcNWh/c/SkmSgnx+FJ0oUw,0Zt8fiSMLkSWtRYle+t2tw,,,N,0,0,,,2014-04-05 12:27,2014-04-05 13:21,admin,admin,
731,140474,1749,36464,642,0,N,N,N,CP_Drtn,TT_Task,DT_FixedDUR2,TK_NotStart,BL1-MEP-PL-B2-3010,Sanitary Ware Installation Including Connection,,1060,0,96,0,383.862,383.862,96,4451.516455,0,4451.516455,,,,2015-07-25 12:00,2015-08-06 12:00,,2015-03-02 08:00,2015-03-15 16:00,2015-03-02 08:00,2015-03-15 16:00,2015-03-02 08:00,2015-03-15 16:00,2015-07-25 12:00,2015-08-06 12:00,,PT_Normal,,,,,JAcBz7ZbsE2Hg+2z2lSp7A,BwJaAAPRB0KhxN1jufs64g,,,N,0,0,,,2014-04-05 12:27,2014-04-05 13:21,admin,admin,
732,140475,1749,36464,642,0,N,N,N,CP_Drtn,TT_Task,DT_FixedDUR2,TK_NotStart,BL1-MEP-PL-B2-3020,Sanitary Ware Accessories Installation,,1172,344,48,0,36.45,36.45,48,166.215378,0,166.215378,,,,2015-08-20 12:00,2015-08-26 12:00,,2015-03-16 08:00,2015-03-22 16:00,2015-03-16 08:00,2015-03-22 16:00,2015-03-16 08:00,2015-03-22 16:00,2015-08-20 12:00,2015-08-26 12:00,,PT_Normal,,,,,60N7IVlaFESCo7V4DEA4Gg,Ji8DnGoXJ02MEd8QtBUJyA,,,N,0,0,,,2014-04-05 12:27,2014-04-05 13:21,admin,admin,
733,140476,1749,36465,642,0,N,N,N,CP_Drtn,TT_Task,DT_FixedDUR2,TK_NotStart,BL1-MEP-PL-B2-3000,Manhole Covers  Installation,,2920,192,48,0,37.5,37.5,48,50.963671,0,50.963671,,,,2016-02-02 08:00,2016-02-07 16:00,,2015-01-13 08:00,2015-01-19 16:00,2015-01-13 08:00,2015-01-19 16:00,2015-01-13 08:00,2015-01-19 16:00,2016-02-02 08:00,2016-02-07 16:00,,PT_Normal,,,,,LiDVqE/E0kyeop0waQCjTw,vZxpjyBzkk6M7ospXpXVqw,,,N,0,0,,,2014-04-05 12:27,2014-04-05 13:21,admin,admin,
734,140477,1749,36465,642,0,N,N,N,CP_Drtn,TT_Task,DT_FixedDUR2,TK_NotStart,BL1-MEP-PL-B2-2010,Parking Drain Installation,,1052,0,48,0,48,48,48,553.83323,0,553.83323,,,,2015-06-01 12:00,2015-06-07 12:00,,2014-12-28 08:00,2015-01-05 16:00,2014-12-28 08:00,2015-01-05 16:00,2014-12-28 08:00,2015-01-05 16:00,2015-06-01 12:00,2015-06-07 12:00,,PT_Normal,,,,,vKspTN/32EuNlr6Qy8yeig,rLs9tv0NB0yWGzOz52bK5Q,,,N,0,0,,,2014-04-05 12:27,2014-04-05 13:21,admin,admin,
735,140478,1749,36465,642,0,N,N,N,CP_Drtn,TT_Task,DT_FixedDUR2,TK_NotStart,BL1-MEP-PL-B2-2030,High Level Water Supply Pipes and Fittings Installation,,1084,0,168,0,150.02,150.02,168,1329.597866,0,1329.597866,,,,2015-04-30 12:00,2015-05-25 12:00,,2014-11-22 08:00,2014-12-15 16:00,2014-11-22 08:00,2014-12-15 16:00,2014-11-22 08:00,2014-12-15 16:00,2015-04-30 12:00,2015-05-25 12:00,,PT_Normal,,,,,HfIm0niAZUSEUc/UC5lWOQ,6ZhhyGwiUUa2Fg8LPDhdAA,,,N,0,0,,,2014-04-05 12:27,2014-04-05 13:21,admin,admin,
736,140479,1749,36465,642,0,N,N,N,CP_Drtn,TT_Task,DT_FixedDUR2,TK_NotStart,BL1-MEP-PL-B2-2000,High Level Drainage Pipes Installation,,1196,72,168,0,244.38,244.38,168,6583.525267,0,6583.525267,,,,2015-04-30 12:00,2015-05-25 12:00,,2014-11-05 08:00,2014-11-29 16:00,2014-11-05 08:00,2014-11-29 16:00,2014-11-05 08:00,2014-11-29 16:00,2015-04-30 12:00,2015-05-25 12:00,,PT_Normal,,,,,EFyPHaRVyEeX4jnJdVlTIg,uXZnOvFGU0yr4CFILuDNbw,,,N,0,0,,,2014-04-05 12:27,2014-04-05 13:21,admin,admin,
737,140480,1749,36465,642,0,N,N,N,CP_Drtn,TT_Task,DT_FixedDUR2,TK_NotStart,BL1-MEP-PL-B2-2040,Water Supply Pipes Pressure Test,4456,1180,120,48,0,48,48,48,151.744312,0,151.744312,,,,2015-06-07 12:00,2015-06-13 12:00,,2014-12-16 08:00,2014-12-22 16:00,2014-12-16 08:00,2014-12-22 16:00,2014-12-16 08:00,2014-12-22 16:00,2015-06-07 12:00,2015-06-13 12:00,,PT_Normal,,,,,joev4bznB0mtpadvyoRVJA,VrDFDuIrIku35l5Bo8jeCg,,,N,0,0,,,2014-04-05 12:27,2014-04-05 13:21,admin,admin,
738,140481,1749,36465,642,0,N,N,N,CP_Drtn,TT_Task,DT_FixedDUR2,TK_NotStart,BL1-MEP-PL-B2-2020,Drainage Pipes Gravity Test,,1052,0,48,0,48,48,48,826.240719,0,826.240719,,,,2015-06-07 12:00,2015-06-13 12:00,,2015-01-06 08:00,2015-01-12 16:00,2015-01-06 08:00,2015-01-12 16:00,2015-01-06 08:00,2015-01-12 16:00,2015-06-07 12:00,2015-06-13 12:00,,PT_Normal,,,,,zw2CZSAAQE6x2iUlm7IoEA,q0vHcTvWI0W1Gkv45WvfMA,,,N,0,0,,,2014-04-05 12:27,2014-04-05 13:21,admin,admin,
739,140482,1749,36465,642,0,N,N,N,CP_Drtn,TT_Task,DT_FixedDUR2,TK_NotStart,BL1-MEP-PL-B2-2050,Sump Pumps Installation Including Connection,,2248,1768,168,0,450,450,168,2579.277817,0,2579.277817,,,,2016-01-02 08:00,2016-01-22 16:00,,2015-03-16 08:00,2015-04-08 16:00,2015-03-16 08:00,2015-04-08 16:00,2015-03-16 08:00,2015-04-08 16:00,2016-01-02 08:00,2016-01-22 16:00,,PT_Normal,,,,,2/ortvcs7Ey/lquel/c22w,DivffqZeUUmFmH7VFaAgkA,,,N,0,0,,,2014-04-05 12:27,2014-04-05 13:21,admin,admin,
740,140483,1749,36466,642,0,N,N,N,CP_Drtn,TT_Task,DT_FixedDUR2,TK_NotStart,BL1-MEP-PL-B2-1000,Low Level Water Supply Pipes Installation,,1028,96,96,0,42,42,96,725.216846,0,725.216846,,,,2015-03-02 12:00,2015-03-16 12:00,,2014-09-23 08:00,2014-10-11 16:00,2014-09-23 08:00,2014-10-11 16:00,2014-09-23 08:00,2014-10-11 16:00,2015-03-02 12:00,2015-03-16 12:00,,PT_Normal,,,,,WvQnufk6A0K983cXTDy8rQ,NQg5LUDIRkeV0W7yE51M1A,,,N,0,0,,,2014-04-05 12:27,2014-04-05 13:21,admin,admin,
741,140484,1749,36466,642,0,N,N,N,CP_Drtn,TT_Task,DT_FixedDUR2,TK_NotStart,BL1-MEP-PL-B2-1010,Low Level Drainage Pipes Installation,,1028,96,96,0,12.67,12.67,96,94.429262,0,94.429262,,,,2015-03-02 12:00,2015-03-16 12:00,,2014-09-23 08:00,2014-10-11 16:00,2014-09-23 08:00,2014-10-11 16:00,2014-09-23 08:00,2014-10-11 16:00,2015-03-02 12:00,2015-03-16 12:00,,PT_Normal,,,,,dx0gweqzB025KU3HodvdRg,Gj5/hL3SakuPygaYcj4daQ,,,N,0,0,,,2014-04-05 12:27,2014-04-05 13:21,admin,admin,
742,140485,1749,36466,642,0,N,N,N,CP_Drtn,TT_Task,DT_FixedDUR2,TK_NotStart,BL1-MEP-PL-B2-1020,Supports  installation for High level Pipes,,1076,96,96,0,16.352,16.352,96,831.682549,0,831.682549,,,,2015-03-09 12:00,2015-03-23 12:00,,2014-09-23 08:00,2014-10-11 16:00,2014-09-23 08:00,2014-10-11 16:00,2014-09-23 08:00,2014-10-11 16:00,2015-03-09 12:00,2015-03-23 12:00,,PT_Normal,,,,,cb+MDa267kG27IAp54q36g,d7LrLYtYqk6h4ncKA5kP0w,,,N,0,0,,,2014-04-05 12:27,2014-04-05 13:21,admin,admin,
743,140486,1749,36372,642,0,N,N,N,CP_Drtn,TT_Task,DT_FixedDUR2,TK_NotStart,BL1-MEP-PL-2F-1000,Low Level Water Supply Pipes Installation,,1040,0,96,0,42,42,96,725.216846,0,725.216846,,,,2015-07-01 08:00,2015-07-12 16:00,,2015-02-04 08:00,2015-02-17 16:00,2015-02-04 08:00,2015-02-17 16:00,2015-02-04 08:00,2015-02-17 16:00,2015-07-01 08:00,2015-07-12 16:00,,PT_Normal,,,,,RhAlbqWg9kW9Z9Ko8sg4JQ,cE1Rx84+qEeAXfUznk89Lw,,,N,0,0,,,2014-04-05 12:27,2014-04-05 13:21,admin,admin,
744,140487,1749,36372,642,0,N,N,N,CP_Drtn,TT_Task,DT_FixedDUR2,TK_NotStart,BL1-MEP-PL-2F-1010,Low Level Drainage Pipes Installation,,1040,0,96,0,12.67,12.67,96,2291.461713,0,2291.461713,,,,2015-07-01 08:00,2015-07-12 16:00,,2015-02-04 08:00,2015-02-17 16:00,2015-02-04 08:00,2015-02-17 16:00,2015-02-04 08:00,2015-02-17 16:00,2015-07-01 08:00,2015-07-12 16:00,,PT_Normal,,,,,gquHSETwMUyo3KFJL3Q9dg,gK98N+Cx3EaIt7YXzcOkXA,,,N,0,0,,,2014-04-05 12:27,2014-04-05 13:21,admin,admin,
745,140488,1749,36372,642,0,N,N,N,CP_Drtn,TT_Task,DT_FixedDUR2,TK_NotStart,BL1-MEP-PL-2F-1020,Supports  installation for High level Pipes,,1256,96,96,0,16.352,16.352,96,831.682549,0,831.682549,,,,2015-07-28 08:00,2015-08-08 16:00,,2015-02-04 08:00,2015-02-17 16:00,2015-02-04 08:00,2015-02-17 16:00,2015-02-04 08:00,2015-02-17 16:00,2015-07-28 08:00,2015-08-08 16:00,,PT_Normal,,,,,UzkwVjISDUq60DIpQHyMsg,hYBYGN7dMk2I9gp2RuNgAQ,,,N,0,0,,,2014-04-05 12:27,2014-04-05 13:21,admin,admin,
746,140489,1749,36373,642,0,N,N,N,CP_Drtn,TT_Task,DT_FixedDUR2,TK_NotStart,BL1-MEP-PL-2F-3000,Sanitary Ware Installation Including Connection,,1096,0,112,0,383.862,383.862,112,4453.516455,0,4453.516455,,,,2015-11-08 08:00,2015-11-21 16:00,,2015-06-24 08:00,2015-07-07 16:00,2015-06-24 08:00,2015-07-07 16:00,2015-06-24 08:00,2015-07-07 16:00,2015-11-08 08:00,2015-11-21 16:00,,PT_Normal,,,,,0y9c6HnOoUeHKLD5GEYJzw,JivZ7EkZ10yw+JEV9XpHsw,,,N,0,0,,,2014-04-05 12:27,2014-04-05 13:21,admin,admin,
747,140490,1749,36373,642,0,N,N,N,CP_Drtn,TT_Task,DT_FixedDUR2,TK_NotStart,BL1-MEP-PL-2F-3010,Sanitary Ware Accessories Installation,,1352,56,48,0,36.45,36.45,48,166.215378,0,166.215378,,,,2015-12-24 08:00,2015-12-29 16:00,,2015-07-08 08:00,2015-07-13 16:00,2015-07-08 08:00,2015-07-13 16:00,2015-07-08 08:00,2015-07-13 16:00,2015-12-24 08:00,2015-12-29 16:00,,PT_Normal,,,,,qi7n+6RzbEiJeZA1VHDnnQ,WYU7xZCElEKq1eUAvDcybQ,,,N,0,0,,,2014-04-05 12:27,2014-04-05 13:21,admin,admin,
748,140491,1749,36483,642,0,N,N,N,CP_Drtn,TT_Task,DT_FixedDUR2,TK_NotStart,BL1-MEP-PL-2F-2010,Floor Drain Installation,,1064,0,48,0,6,6,48,554.143324,0,554.143324,,,,2015-09-17 08:00,2015-09-22 16:00,,2015-05-03 08:00,2015-05-09 16:00,2015-05-03 08:00,2015-05-09 16:00,2015-05-03 08:00,2015-05-09 16:00,2015-09-17 08:00,2015-09-22 16:00,,PT_Normal,,,,,Iw7cU6L3W0S2pzpEFjYoZg,EeEy/d6cj0Kn5+f5+JE3TA,,,N,0,0,,,2014-04-05 12:27,2014-04-05 13:21,admin,admin,
749,140492,1749,36483,642,0,N,N,N,CP_Drtn,TT_Task,DT_FixedDUR2,TK_NotStart,BL1-MEP-PL-2F-2020,High Level Water Supply Pipes and Fittings Installation,,1112,0,168,0,150.02,150.02,168,1329.597866,0,1329.597866,,,,2015-08-09 08:00,2015-08-29 16:00,,2015-03-11 08:00,2015-04-04 16:00,2015-03-11 08:00,2015-04-04 16:00,2015-03-11 08:00,2015-04-04 16:00,2015-08-09 08:00,2015-08-29 16:00,,PT_Normal,,,,,BiczLfpDck2vTIIzHOf8mQ,ex+TWlZ6VkSILn77k0AIDA,,,N,0,0,,,2014-04-05 12:27,2014-04-05 13:21,admin,admin,
750,140493,1749,36483,642,0,N,N,N,CP_Drtn,TT_Task,DT_FixedDUR2,TK_NotStart,BL1-MEP-PL-2F-2000,High Level Drainage Pipes Installation,,1112,24,168,0,244.38,244.38,168,6583.525267,0,6583.525267,,,,2015-08-09 08:00,2015-08-29 16:00,,2015-03-11 08:00,2015-04-04 16:00,2015-03-11 08:00,2015-04-04 16:00,2015-03-11 08:00,2015-04-04 16:00,2015-08-09 08:00,2015-08-29 16:00,,PT_Normal,,,,,wwRjCDqIS0Su+JWtGEbFGA,Dal1xGfQH0W8HLTbHWPx9g,,,N,0,0,,,2014-04-05 12:27,2014-04-05 13:21,admin,admin,
751,140494,1749,36483,642,0,N,N,N,CP_Drtn,TT_Task,DT_FixedDUR2,TK_NotStart,BL1-MEP-PL-2F-2040,Water Supply Pipes Pressure Test,4456,1304,144,48,0,48,48,48,151.744312,0,151.744312,,,,2015-09-23 08:00,2015-09-28 16:00,,2015-04-05 08:00,2015-04-11 16:00,2015-04-05 08:00,2015-04-11 16:00,2015-04-05 08:00,2015-04-11 16:00,2015-09-23 08:00,2015-09-28 16:00,,PT_Normal,,,,,xU7QObHjF02s4sV6yWzpVw,8nCFywSgsUaip8roOjEHOQ,,,N,0,0,,,2014-04-05 12:27,2014-04-05 13:21,admin,admin,
752,140495,1749,36483,642,0,N,N,N,CP_Drtn,TT_Task,DT_FixedDUR2,TK_NotStart,BL1-MEP-PL-2F-2030,Drainage Pipes Gravity Test,,1064,0,48,0,48,48,48,826.240719,0,826.240719,,,,2015-09-23 08:00,2015-09-28 16:00,,2015-05-10 08:00,2015-05-16 16:00,2015-05-10 08:00,2015-05-16 16:00,2015-05-10 08:00,2015-05-16 16:00,2015-09-23 08:00,2015-09-28 16:00,,PT_Normal,,,,,NBYnUWG7IUCVULQfTz/pWQ,UZImrT+VG0SVWPGSewhqTg,,,N,0,0,,,2014-04-05 12:27,2014-04-05 13:21,admin,admin,
753,140496,1749,36417,642,0,N,N,N,CP_Drtn,TT_Task,DT_FixedDUR2,TK_NotStart,BL1-MEP-AC-2F-3000,Grills and Diffusers Fixing,,1472,0,96,0,384,384,96,11550.608192,0,11550.608192,,,,2015-12-19 08:00,2015-12-30 16:00,,2015-06-18 08:00,2015-06-29 16:00,2015-06-18 08:00,2015-06-29 16:00,2015-06-18 08:00,2015-06-29 16:00,2015-12-19 08:00,2015-12-30 16:00,,PT_Normal,,,,,pHAwrIHHREe+sWAuQQEJnQ,VR0TevuGIUqZHcRVbPFP6Q,,,N,0,0,,,2014-04-05 12:27,2014-04-05 13:21,admin,admin,
754,140497,1749,36391,642,0,N,N,N,CP_Drtn,TT_Task,DT_FixedDUR2,TK_NotStart,BL1-MEP-AC-2F-1000,Supports and Hungers Fixing,,1184,96,96,0,192,192,96,338.467259,0,338.467259,,,,2015-07-19 08:00,2015-07-30 16:00,,2015-02-04 08:00,2015-02-17 16:00,2015-02-04 08:00,2015-02-17 16:00,2015-02-04 08:00,2015-02-17 16:00,2015-07-19 08:00,2015-07-30 16:00,,PT_Normal,,,,,CYyd/4A5+EG1jX/2w/bqoQ,U7mzfY9/CUOVnFVUGsitsQ,,,N,0,0,,,2014-04-05 12:27,2014-04-05 13:21,admin,admin,
755,140498,1749,36378,642,0,N,N,N,CP_Drtn,TT_Task,DT_FixedDUR2,TK_NotStart,BL1-MEP-AC-2F-2010,Duct Installation and Insulation,4454,1008,0,168,0,263,263,168,4350.939473,0,4350.939473,,,,2015-08-01 08:00,2015-08-21 16:00,,2015-03-17 08:00,2015-04-09 16:00,2015-03-17 08:00,2015-04-09 16:00,2015-03-17 08:00,2015-04-09 16:00,2015-08-01 08:00,2015-08-21 16:00,,PT_Normal,,,,,0FI7sn+zwkqticR0+3Le0A,FVmZQKfLokipJ8Bcwoa24Q,,,N,0,0,,,2014-04-05 12:27,2014-04-05 13:21,admin,admin,
756,140499,1749,36378,642,0,N,N,N,CP_Drtn,TT_Task,DT_FixedDUR2,TK_NotStart,BL1-MEP-AC-2F-2040,Duct Accessories Installation,4457,1200,56,112,0,448,448,112,666.965527,0,666.965527,,,,2015-09-15 08:00,2015-09-28 16:00,,2015-04-11 08:00,2015-04-26 16:00,2015-04-11 08:00,2015-04-26 16:00,2015-04-11 08:00,2015-04-26 16:00,2015-09-15 08:00,2015-09-28 16:00,,PT_Normal,,,,,HQTD2WMSy0uzULvz4COb4g,by4nhok2Gk+46K3rcHgXyg,,,N,0,0,,,2014-04-05 12:27,2014-04-05 13:21,admin,admin,
757,140500,1749,36378,642,0,N,N,N,CP_Drtn,TT_Task,DT_FixedDUR2,TK_NotStart,BL1-MEP-AC-2F-2050,FCU's Installation,4457,1384,128,64,0,192,192,64,6000.055155,0,6000.055155,,,,2015-09-12 08:00,2015-09-19 16:00,,2015-03-11 08:00,2015-03-19 16:00,2015-03-11 08:00,2015-03-19 16:00,2015-03-11 08:00,2015-03-19 16:00,2015-09-12 08:00,2015-09-19 16:00,,PT_Normal,,,,,NGLh6ZfeMEOMKtAjex274w,HV1LRC9ul0CF6mTdUXSxHw,,,N,0,0,,,2014-04-05 12:27,2014-04-05 13:21,admin,admin,
758,140501,1749,36378,642,0,N,N,N,CP_Drtn,TT_Task,DT_FixedDUR2,TK_NotStart,BL1-MEP-AC-2F-2000,Chilled Water Pipes and Fittings Installation,4457,1040,0,168,0,840,840,168,5251.194852,0,5251.194852,,,,2015-07-31 08:00,2015-08-20 16:00,,2015-03-11 08:00,2015-04-04 16:00,2015-03-11 08:00,2015-04-04 16:00,2015-03-11 08:00,2015-04-04 16:00,2015-07-31 08:00,2015-08-20 16:00,,PT_Normal,,,,,NQ+aRZnJpE+wmhAyrO+GrQ,/wM4G8R1x0qXSkAuOhNFnA,,,N,0,0,,,2014-04-05 12:27,2014-04-05 13:21,admin,admin,
759,140502,1749,36378,642,0,N,N,N,CP_Drtn,TT_Task,DT_FixedDUR2,TK_NotStart,BL1-MEP-AC-2F-2020,Chilled Water Pipes Pressure Test,4457,1232,0,48,0,96,96,48,587.116683,0,587.116683,,,,2015-09-14 08:00,2015-09-19 16:00,,2015-04-05 08:00,2015-04-11 16:00,2015-04-05 08:00,2015-04-11 16:00,2015-04-05 08:00,2015-04-11 16:00,2015-09-14 08:00,2015-09-19 16:00,,PT_Normal,,,,,5ibnzI6Cy0OBJWXG6bww4g,WStWTPoAK0ej/sLqQNrmsw,,,N,0,0,,,2014-04-05 12:27,2014-04-05 13:21,admin,admin,
760,140503,1749,36378,642,0,N,N,N,CP_Drtn,TT_Task,DT_FixedDUR2,TK_NotStart,BL1-MEP-AC-2F-2030,Chilled Water Pipes Insulation,4457,1808,96,96,0,384,384,96,1670.208495,0,1670.208495,,,,2015-12-01 08:00,2015-12-12 16:00,,2015-04-12 08:00,2015-04-25 16:00,2015-04-12 08:00,2015-04-25 16:00,2015-04-12 08:00,2015-04-25 16:00,2015-12-01 08:00,2015-12-12 16:00,,PT_Normal,,,,,iy9XxKVzrE2Qxgd/fjaDWA,FSZC832JlkOw3qaxsrf3Kw,,,N,0,0,,,2014-04-05 12:27,2014-04-05 13:21,admin,admin,
761,140504,1749,36378,642,0,N,N,N,CP_Drtn,TT_Task,DT_FixedDUR2,TK_NotStart,BL1-MEP-AC-2F-2060,Valve Package Installation,4457,1232,0,48,0,96,96,48,2386.490429,0,2386.490429,,,,2015-09-20 08:00,2015-09-25 16:00,,2015-04-12 08:00,2015-04-18 16:00,2015-04-12 08:00,2015-04-18 16:00,2015-04-12 08:00,2015-04-18 16:00,2015-09-20 08:00,2015-09-25 16:00,,PT_Normal,,,,,FRSG5OpIMEOIfzt+cpeppw,7IQYVO9HxUW0DWOAZ6Ktcw,,,N,0,0,,,2014-04-05 12:27,2014-04-05 13:21,admin,admin,
762,140505,1749,36378,642,0,N,N,N,CP_Drtn,TT_Task,DT_FixedDUR2,TK_NotStart,BL1-MEP-AC-2F-2070,FCU's Drain Pipes Installation,4457,1232,168,24,0,48,48,24,519.927167,0,519.927167,,,,2015-09-26 08:00,2015-09-28 16:00,,2015-04-19 08:00,2015-04-21 16:00,2015-04-19 08:00,2015-04-21 16:00,2015-04-19 08:00,2015-04-21 16:00,2015-09-26 08:00,2015-09-28 16:00,,PT_Normal,,,,,6MIWk//AV0+oq0+B3MNX0A,NPT2wDxaH0aLeYMkxpbtFA,,,N,0,0,,,2014-04-05 12:27,2014-04-05 13:21,admin,admin,
763,140506,1749,36480,642,0,N,N,N,CP_Drtn,TT_Task,DT_FixedDUR2,TK_NotStart,BL1-MEP-FF-2F-3000,Fire Extinguisher Installation,,1648,120,16,0,8,8,16,1076.993507,0,1076.993507,,,,2016-02-07 08:00,2016-02-08 16:00,,2015-07-16 08:00,2015-07-17 16:00,2015-07-16 08:00,2015-07-17 16:00,2015-07-16 08:00,2015-07-17 16:00,2016-02-07 08:00,2016-02-08 16:00,,PT_Normal,,,,,TiiW+rmOoEWPYoT9sOIymA,aehewavyA0OhcCAstLUewA,,,N,0,0,,,2014-04-05 12:27,2014-04-05 13:21,admin,admin,
764,140507,1749,36480,642,0,N,N,N,CP_Drtn,TT_Task,DT_FixedDUR2,TK_NotStart,BL1-MEP-FF-2F-3010,Hose reel Cabinet Installation and Connection,,1496,0,48,0,192,192,48,1336.852298,0,1336.852298,,,,2016-01-18 08:00,2016-01-23 16:00,,2015-07-15 08:00,2015-07-20 16:00,2015-07-15 08:00,2015-07-20 16:00,2015-07-15 08:00,2015-07-20 16:00,2016-01-18 08:00,2016-01-23 16:00,,PT_Normal,,,,,YftB96W2e0+HWD69gbdsVA,a2kcX6yqa0egojEpYvESyA,,,N,0,0,,,2014-04-05 12:27,2014-04-05 13:21,admin,admin,
765,140508,1749,36173,642,0,N,N,N,CP_Drtn,TT_Task,DT_FixedDUR2,TK_NotStart,BL1-MEP-EL-2F-1000,PVC Back Boxes and Conduits  Fixing in Wall,,1040,96,96,0,384,384,96,3319.67233,0,3319.67233,,,,2015-06-22 08:00,2015-07-03 16:00,,2015-01-25 08:00,2015-02-07 16:00,2015-01-25 08:00,2015-02-07 16:00,2015-01-25 08:00,2015-02-07 16:00,2015-06-22 08:00,2015-07-03 16:00,,PT_Normal,,,,,ceoZN0ZrckCCfyiUOp4Y3A,mTxr4OGxokOXHRc/IfXiDw,,,N,0,0,,,2014-04-05 12:27,2014-04-05 13:21,admin,admin,
766,140509,1749,36173,642,0,N,N,N,CP_Drtn,TT_Task,DT_FixedDUR2,TK_NotStart,BL1-MEP-EL-2F-1010,DB's Inclosure Fixing,4455,1256,144,48,0,96,96,48,2136.399392,0,2136.399392,,,,2015-07-28 08:00,2015-08-02 16:00,,2015-02-04 08:00,2015-02-10 16:00,2015-02-04 08:00,2015-02-10 16:00,2015-02-04 08:00,2015-02-10 16:00,2015-07-28 08:00,2015-08-02 16:00,,PT_Normal,,,,,uubLBk/k5EmhiewABznGbQ,MBXAcD/3qE6tzez1ArcbtQ,,,N,0,0,,,2014-04-05 12:27,2014-04-05 13:21,admin,admin,
767,140510,1749,36265,642,0,N,N,N,CP_Drtn,TT_Task,DT_FixedDUR2,TK_NotStart,BL1-MEP-EL-2F-3020,Lights Fitting Fixing,,1240,0,112,0,244,244,112,7336.659378,0,7336.659378,,,,2015-11-28 08:00,2015-12-11 16:00,,2015-06-26 08:00,2015-07-09 16:00,2015-06-26 08:00,2015-07-09 16:00,2015-06-26 08:00,2015-07-09 16:00,2015-11-28 08:00,2015-12-11 16:00,,PT_Normal,,,,,M33DBmSPvE+9XbMZN9GkXQ,bIe/sNu/6U+8jVR+G/CkTw,,,N,0,0,,,2014-04-05 12:27,2014-04-05 13:21,admin,admin,
768,140511,1749,36265,642,0,N,N,N,CP_Drtn,TT_Task,DT_FixedDUR2,TK_NotStart,BL1-MEP-EL-2F-3050,Sockets and Switches Fixing,,1784,128,64,0,128,128,64,1174.957134,0,1174.957134,,,,2016-01-03 08:00,2016-01-10 16:00,,2015-05-24 08:00,2015-06-01 16:00,2015-05-24 08:00,2015-06-01 16:00,2015-05-24 08:00,2015-06-01 16:00,2016-01-03 08:00,2016-01-10 16:00,,PT_Normal,,,,,pK7JIX5sykSW/1HqzvzhRg,oF41g2DkH0aKR5uYZSGNzA,,,N,0,0,,,2014-04-05 12:27,2014-04-05 13:21,admin,admin,
769,140512,1749,36265,642,0,N,N,N,CP_Drtn,TT_Task,DT_FixedDUR2,TK_NotStart,BL1-MEP-EL-2F-3000,Emergency Light Fixing,,1848,128,64,0,128,128,64,5722.024623,0,5722.024623,,,,2016-01-11 08:00,2016-01-18 16:00,,2015-05-24 08:00,2015-06-01 16:00,2015-05-24 08:00,2015-06-01 16:00,2015-05-24 08:00,2015-06-01 16:00,2016-01-11 08:00,2016-01-18 16:00,,PT_Normal,,,,,Zbi1NrWKk0SyHR5QyoJ2ww,IyZRVK13P0OuS40vsE1WfA,,,N,0,0,,,2014-04-05 12:27,2014-04-05 13:21,admin,admin,
770,140513,1749,36265,642,0,N,N,N,CP_Drtn,TT_Task,DT_FixedDUR2,TK_NotStart,BL1-MEP-EL-2F-3010,Fire Alarm System Detector Installation,,1592,96,96,0,192,192,96,4046.378277,0,4046.378277,,,,2015-12-10 08:00,2015-12-21 16:00,,2015-05-24 08:00,2015-06-05 16:00,2015-05-24 08:00,2015-06-05 16:00,2015-05-24 08:00,2015-06-05 16:00,2015-12-10 08:00,2015-12-21 16:00,,PT_Normal,,,,,362bNrL1XUCpElAHw8lBaw,udlqEzdlmE6vkuxQ/amiqw,,,N,0,0,,,2014-04-05 12:27,2014-04-05 13:21,admin,admin,
771,140514,1749,36265,642,0,N,N,N,CP_Drtn,TT_Task,DT_FixedDUR2,TK_NotStart,BL1-MEP-EL-2F-3070,SMDB's  Termination and Final Connection,,1792,144,48,0,192,192,48,2791.825001,0,2791.825001,,,,2016-01-04 08:00,2016-01-09 16:00,,2015-05-24 08:00,2015-05-30 16:00,2015-05-24 08:00,2015-05-30 16:00,2015-05-24 08:00,2015-05-30 16:00,2016-01-04 08:00,2016-01-09 16:00,,PT_Normal,,,,,IppdYqUwAUayVJPSxG9WnQ,kb8a36/q00WBswG7GVjVog,,,N,0,0,,,2014-04-05 12:27,2014-04-05 13:21,admin,admin,
772,140515,1749,36234,642,0,N,N,N,CP_Drtn,TT_Task,DT_FixedDUR2,TK_NotStart,BL1-MEP-EL-2F-3060,Power Cable Puling,,1528,80,112,0,168,168,112,6375.759893,0,6375.759893,,,,2015-10-27 08:00,2015-11-09 16:00,,2015-04-12 08:00,2015-04-27 16:00,2015-04-12 08:00,2015-04-27 16:00,2015-04-12 08:00,2015-04-27 16:00,2015-10-27 08:00,2015-11-09 16:00,,PT_Normal,,,,,ctMs73Z7nUGe5LP6deq9gw,+CNDP+YDzE6G4Lt4rR5raQ,,,N,0,0,,,2014-04-05 12:27,2014-04-05 13:21,admin,admin,
773,140516,1749,36265,642,0,N,N,N,CP_Drtn,TT_Task,DT_FixedDUR2,TK_NotStart,BL1-MEP-EL-2F-3030,Despature for Low Current  System Installation,4455,1528,0,112,0,336,336,112,72752.164276,0,72752.164276,,,,2015-12-02 08:00,2015-12-15 16:00,,2015-05-24 08:00,2015-06-07 16:00,2015-05-24 08:00,2015-06-07 16:00,2015-05-24 08:00,2015-06-07 16:00,2015-12-02 08:00,2015-12-15 16:00,,PT_Normal,,,,,FBsh+7QH/0qp8vaLA1TFGQ,h/g9HlSYik6/70oE+dt/OQ,,,N,0,0,,,2014-04-05 12:27,2014-04-05 13:21,admin,admin,
774,140517,1749,36265,642,0,N,N,N,CP_Drtn,TT_Task,DT_FixedDUR2,TK_NotStart,BL1-MEP-EL-2F-3040,Low Current  System Outlet installation and Connection,4455,1912,264,80,0,80,80,80,3870.787498,0,3870.787498,,,,2016-02-02 08:00,2016-02-11 16:00,,2015-06-08 08:00,2015-06-17 16:00,2015-06-08 08:00,2015-06-17 16:00,2015-06-08 08:00,2015-06-17 16:00,2016-02-02 08:00,2016-02-11 16:00,,PT_Normal,,,,,SxcMkb4ETEiQy4bneW3WqQ,P6zK8i4J3U2FEHarnZVvrA,,,N,0,0,,,2014-04-05 12:27,2014-04-05 13:21,admin,admin,
775,140518,1749,36234,642,0,N,N,N,CP_Drtn,TT_Task,DT_FixedDUR2,TK_NotStart,BL1-MEP-EL-2F-2030,SMDB's  Installation,,2112,128,48,0,45,45,48,4202.598932,0,4202.598932,,,,2015-12-29 08:00,2016-01-03 16:00,,2015-03-31 08:00,2015-04-06 16:00,2015-03-31 08:00,2015-04-06 16:00,2015-03-31 08:00,2015-04-06 16:00,2015-12-29 08:00,2016-01-03 16:00,,PT_Normal,,,,,AYSRfWb9cUq6H4/DhtHGsQ,nowCmmu8lEC8nfqLEvf0qg,,,N,0,0,,,2014-04-05 12:27,2014-04-05 13:21,admin,admin,
776,140519,1749,36234,642,0,N,N,N,CP_Drtn,TT_Task,DT_FixedDUR2,TK_NotStart,BL1-MEP-EL-2F-2040,Lighting  Wiring,,1424,96,96,0,241.713,241.713,96,3578.08423,0,3578.08423,,,,2015-09-17 08:00,2015-09-28 16:00,,2015-03-11 08:00,2015-03-24 16:00,2015-03-11 08:00,2015-03-24 16:00,2015-03-11 08:00,2015-03-24 16:00,2015-09-17 08:00,2015-09-28 16:00,,PT_Normal,,,,,arXoV1LOo0OzOmPxiKErog,z5iFug0vikmgduaaiqq60A,,,N,0,0,,,2014-04-05 12:27,2014-04-05 13:21,admin,admin,
777,140520,1749,36234,642,0,N,N,N,CP_Drtn,TT_Task,DT_FixedDUR2,TK_NotStart,BL1-MEP-EL-2F-2050,Power Points Wiring,,1328,24,96,0,192,192,96,2906.213289,0,2906.213289,,,,2015-09-05 08:00,2015-09-16 16:00,,2015-03-11 08:00,2015-03-24 16:00,2015-03-11 08:00,2015-03-24 16:00,2015-03-11 08:00,2015-03-24 16:00,2015-09-05 08:00,2015-09-16 16:00,,PT_Normal,,,,,51c1JFlWIUydU/aOipU+FA,dv/i2GEBIkaSoKwe/2Fpww,,,N,0,0,,,2014-04-05 12:27,2014-04-05 13:21,admin,admin,
778,140521,1749,36234,642,0,N,N,N,CP_Drtn,TT_Task,DT_FixedDUR2,TK_NotStart,BL1-MEP-EL-2F-2000,Cable Tray and Trunking Installation,,1408,80,112,0,336,336,112,9078.448617,0,9078.448617,,,,2015-09-15 08:00,2015-09-28 16:00,,2015-03-11 08:00,2015-03-26 16:00,2015-03-11 08:00,2015-03-26 16:00,2015-03-11 08:00,2015-03-26 16:00,2015-09-15 08:00,2015-09-28 16:00,,PT_Normal,,,,,i8h8PWI1lUKv654uvG89Sw,OSOQtp6QdU+HFz3vixpeJg,,,N,0,0,,,2014-04-05 12:27,2014-04-05 13:21,admin,admin,
779,140522,1749,36234,642,0,N,N,N,CP_Drtn,TT_Task,DT_FixedDUR2,TK_NotStart,BL1-MEP-EL-2F-2060,Emergency Light Wiring,,1456,128,64,0,128,128,64,1210.028798,0,1210.028798,,,,2015-09-21 08:00,2015-09-28 16:00,,2015-03-11 08:00,2015-03-19 16:00,2015-03-11 08:00,2015-03-19 16:00,2015-03-11 08:00,2015-03-19 16:00,2015-09-21 08:00,2015-09-28 16:00,,PT_Normal,,,,,aQSxtBdv8kCCbTOQU2xY6Q,ShhUufR2PES8sf1MNrj5aw,,,N,0,0,,,2014-04-05 12:27,2014-04-05 13:21,admin,admin,
780,140523,1749,36234,642,0,N,N,N,CP_Drtn,TT_Task,DT_FixedDUR2,TK_NotStart,BL1-MEP-EL-2F-2010,Fire Alarm System Wiring,,1424,96,96,0,192,192,96,7123.009694,0,7123.009694,,,,2015-09-17 08:00,2015-09-28 16:00,,2015-03-11 08:00,2015-03-24 16:00,2015-03-11 08:00,2015-03-24 16:00,2015-03-11 08:00,2015-03-24 16:00,2015-09-17 08:00,2015-09-28 16:00,,PT_Normal,,,,,a/AKZROtZkKTIVd0XIKwfQ,GmKJIpQyoEy8fgmP9F3u7Q,,,N,0,0,,,2014-04-05 12:27,2014-04-05 13:21,admin,admin,
781,140524,1749,36234,642,0,N,N,N,CP_Drtn,TT_Task,DT_FixedDUR2,TK_NotStart,BL1-MEP-EL-2F-2070,DB's Installation and Termination,4455,1304,0,96,0,288,288,96,4982.925025,0,4982.925025,,,,2015-09-17 08:00,2015-09-28 16:00,,2015-03-29 08:00,2015-04-11 16:00,2015-03-29 08:00,2015-04-11 16:00,2015-03-29 08:00,2015-04-11 16:00,2015-09-17 08:00,2015-09-28 16:00,,PT_Normal,,,,,xFEF1hIC0U+OKcioQin2EA,YGvPpdj8mE+I86rMzGWZrQ,,,N,0,0,,,2014-04-05 12:27,2014-04-05 13:21,admin,admin,
782,140525,1749,36234,642,0,N,N,N,CP_Drtn,TT_Task,DT_FixedDUR2,TK_NotStart,BL1-MEP-EL-2F-2020,Low Current  System Wiring,4455,1920,392,112,0,244,244,112,38231.783306,0,38231.783306,,,,2015-11-18 08:00,2015-12-01 16:00,,2015-03-11 08:00,2015-03-26 16:00,2015-03-11 08:00,2015-03-26 16:00,2015-03-11 08:00,2015-03-26 16:00,2015-11-18 08:00,2015-12-01 16:00,,PT_Normal,,,,,WcQhJYALa0mPYsjKumMAfw,QY+8rRqI/EKTRyoe30KE1A,,,N,0,0,,,2014-04-05 12:27,2014-04-05 13:21,admin,admin,
783,140526,1749,35629,642,0,N,N,N,CP_Drtn,TT_Task,DT_FixedDUR2,TK_NotStart,BL1-LFT-10,Lift Installation,,1056,720,480,0,0,0,480,365841.1867,0,365841.1867,,,,2015-12-19 08:00,2016-02-16 16:00,,2015-08-09 08:00,2015-10-07 16:00,2015-08-09 08:00,2015-10-07 16:00,2015-08-09 08:00,2015-10-07 16:00,2015-12-19 08:00,2016-02-16 16:00,,PT_Normal,,,,,IwabwcToIkeWKFBjynm5tg,,,,N,0,0,,,2014-04-05 12:27,2014-04-05 13:21,admin,admin,
784,140527,1749,36393,642,0,N,N,N,CP_Drtn,TT_Task,DT_FixedDUR2,TK_NotStart,BL1-MEP-PL-4F-2010,High Level Water Supply Pipes and Fittings Installation,,1072,0,168,0,150.02,150.02,168,1329.597866,0,1329.597866,,,,2015-09-20 08:00,2015-10-10 16:00,,2015-05-05 08:00,2015-05-28 16:00,2015-05-05 08:00,2015-05-28 16:00,2015-05-05 08:00,2015-05-28 16:00,2015-09-20 08:00,2015-10-10 16:00,,PT_Normal,,,,,38sxbu42iEaiNriqMQXDZw,Ro+vycMaA0W216527aPM3Q,,,N,0,0,,,2014-04-05 12:27,2014-04-05 13:21,admin,admin,
785,140528,1749,36393,642,0,N,N,N,CP_Drtn,TT_Task,DT_FixedDUR2,TK_NotStart,BL1-MEP-PL-4F-2000,High Level Drainage Pipes Installation,,1072,16,168,0,244.38,244.38,168,6583.525267,0,6583.525267,,,,2015-09-20 08:00,2015-10-10 16:00,,2015-05-05 08:00,2015-05-28 16:00,2015-05-05 08:00,2015-05-28 16:00,2015-05-05 08:00,2015-05-28 16:00,2015-09-20 08:00,2015-10-10 16:00,,PT_Normal,,,,,bUMHZvP6SkiM6hJaMn1LXQ,g8/7+FTSM0GSyNg7IZ2gPA,,,N,0,0,,,2014-04-05 12:27,2014-04-05 13:21,admin,admin,
786,140529,1749,36393,642,0,N,N,N,CP_Drtn,TT_Task,DT_FixedDUR2,TK_NotStart,BL1-MEP-PL-4F-2030,Water Supply Pipes Pressure Test,4456,1168,136,48,0,48,48,48,151.744312,0,151.744312,,,,2015-10-23 08:00,2015-10-28 16:00,,2015-05-30 08:00,2015-06-04 16:00,2015-05-30 08:00,2015-06-04 16:00,2015-05-30 08:00,2015-06-04 16:00,2015-10-23 08:00,2015-10-28 16:00,,PT_Normal,,,,,Eh8+DJLxMEqfiP17fT8Pfw,cphI0tRs8EmeZ4umjx+sZQ,,,N,0,0,,,2014-04-05 12:27,2014-04-05 13:21,admin,admin,
787,140530,1749,36393,642,0,N,N,N,CP_Drtn,TT_Task,DT_FixedDUR2,TK_NotStart,BL1-MEP-PL-4F-2020,Drainage Pipes Gravity Test,,928,0,48,0,48,48,48,826.240719,0,826.240719,,,,2015-10-23 08:00,2015-10-28 16:00,,2015-06-29 08:00,2015-07-04 16:00,2015-06-29 08:00,2015-07-04 16:00,2015-06-29 08:00,2015-07-04 16:00,2015-10-23 08:00,2015-10-28 16:00,,PT_Normal,,,,,DZup2yl0zUmnSTPZlxparQ,8QquWx4iX0Cb46h7sV+13w,,,N,0,0,,,2014-04-05 12:27,2014-04-05 13:21,admin,admin,
788,140531,1749,36331,642,0,N,N,N,CP_Drtn,TT_Task,DT_FixedDUR2,TK_NotStart,BL1-MEP-PL-4F-3000,Sanitary Ware Installation Including Connection,,944,0,112,0,383.862,383.862,112,4453.516455,0,4453.516455,,,,2015-12-06 08:00,2015-12-19 16:00,,2015-08-10 08:00,2015-08-23 16:00,2015-08-10 08:00,2015-08-23 16:00,2015-08-10 08:00,2015-08-23 16:00,2015-12-06 08:00,2015-12-19 16:00,,PT_Normal,,,,,wqpBgfWxnk6oOP3wVnadDA,Y+JZFYGMm0K8kbxGlNpwsg,,,N,0,0,,,2014-04-05 12:27,2014-04-05 13:21,admin,admin,
789,140532,1749,36331,642,0,N,N,N,CP_Drtn,TT_Task,DT_FixedDUR2,TK_NotStart,BL1-MEP-PL-4F-3010,Sanitary Ware Accessories Installation,,1072,0,48,0,36.45,36.45,48,166.215378,0,166.215378,,,,2016-01-05 08:00,2016-01-10 16:00,,2015-08-24 08:00,2015-08-29 16:00,2015-08-24 08:00,2015-08-29 16:00,2015-08-24 08:00,2015-08-29 16:00,2016-01-05 08:00,2016-01-10 16:00,,PT_Normal,,,,,THpKUleiHU+iuHKJV30g2Q,owN/XBlAJUaBZvGTj4jbdA,,,N,0,0,,,2014-04-05 12:27,2014-04-05 13:21,admin,admin,
790,140533,1749,36324,642,0,N,N,N,CP_Drtn,TT_Task,DT_FixedDUR2,TK_NotStart,BL1-MEP-PL-4F-1000,Low Level Water Supply Pipes Installation,,928,0,96,0,42,42,96,725.216846,0,725.216846,,,,2015-08-03 08:00,2015-08-14 16:00,,2015-03-31 08:00,2015-04-13 16:00,2015-03-31 08:00,2015-04-13 16:00,2015-03-31 08:00,2015-04-13 16:00,2015-08-03 08:00,2015-08-14 16:00,,PT_Normal,,,,,/Bi85Rvk1E2OXXEiFeB5Lw,M471XGgp506Djk4kqMIbww,,,N,0,0,,,2014-04-05 12:27,2014-04-05 13:21,admin,admin,
791,140534,1749,36324,642,0,N,N,N,CP_Drtn,TT_Task,DT_FixedDUR2,TK_NotStart,BL1-MEP-PL-4F-1010,Low Level Drainage Pipes Installation,,928,0,96,0,12.67,12.67,96,2291.461713,0,2291.461713,,,,2015-08-03 08:00,2015-08-14 16:00,,2015-03-31 08:00,2015-04-13 16:00,2015-03-31 08:00,2015-04-13 16:00,2015-03-31 08:00,2015-04-13 16:00,2015-08-03 08:00,2015-08-14 16:00,,PT_Normal,,,,,1kIf7rycZUiHI+jId+EpaQ,GrCGPqLyQkmDC5NEJ+HWUA,,,N,0,0,,,2014-04-05 12:27,2014-04-05 13:21,admin,admin,
792,140535,1749,36393,642,0,N,N,N,CP_Drtn,TT_Task,DT_FixedDUR2,TK_NotStart,BL1-MEP-PL-4F-1030,Floor Drain Installation,,928,0,48,0,6,6,48,554.143324,0,554.143324,,,,2015-10-17 08:00,2015-10-22 16:00,,2015-06-23 08:00,2015-06-28 16:00,2015-06-23 08:00,2015-06-28 16:00,2015-06-23 08:00,2015-06-28 16:00,2015-10-17 08:00,2015-10-22 16:00,,PT_Normal,,,,,+CZ2bcivukqFdNzbQpcdCw,D+7se7GDGkmIBOpLCHqtuQ,,,N,0,0,,,2014-04-05 12:27,2014-04-05 13:21,admin,admin,
793,140536,1749,36324,642,0,N,N,N,CP_Drtn,TT_Task,DT_FixedDUR2,TK_NotStart,BL1-MEP-PL-4F-1020,Supports  installation for High level Pipes,,1216,88,96,0,16.352,16.352,96,831.682549,0,831.682549,,,,2015-09-08 08:00,2015-09-19 16:00,,2015-03-31 08:00,2015-04-13 16:00,2015-03-31 08:00,2015-04-13 16:00,2015-03-31 08:00,2015-04-13 16:00,2015-09-08 08:00,2015-09-19 16:00,,PT_Normal,,,,,hE0NYps7LE2Hw/dmHNM4bw,pI4wIt+GAEeiZTzt1/9jig,,,N,0,0,,,2014-04-05 12:27,2014-04-05 13:21,admin,admin,
794,140537,1749,36397,642,0,N,N,N,CP_Drtn,TT_Task,DT_FixedDUR2,TK_NotStart,BL1-MEP-AC-4F-2010,Duct Installation and Insulation,4454,1008,0,168,0,263,263,168,4350.939473,0,4350.939473,,,,2015-09-12 08:00,2015-10-02 16:00,,2015-05-05 08:00,2015-05-28 16:00,2015-05-05 08:00,2015-05-28 16:00,2015-05-05 08:00,2015-05-28 16:00,2015-09-12 08:00,2015-10-02 16:00,,PT_Normal,,,,,+z6yqrGMA0yUD3Ng1qCpFA,rUTL/O2yTkm1Q0niAwuR/Q,,,N,0,0,,,2014-04-05 12:27,2014-04-05 13:21,admin,admin,
795,140538,1749,36397,642,0,N,N,N,CP_Drtn,TT_Task,DT_FixedDUR2,TK_NotStart,BL1-MEP-AC-4F-2070,Duct Accessories Installation,4457,1104,72,112,0,448,448,112,666.965527,0,666.965527,,,,2015-10-15 08:00,2015-10-28 16:00,,2015-05-30 08:00,2015-06-12 16:00,2015-05-30 08:00,2015-06-12 16:00,2015-05-30 08:00,2015-06-12 16:00,2015-10-15 08:00,2015-10-28 16:00,,PT_Normal,,,,,CUcsio1ZzEeeRJfRcZbNqg,qdoNzpcv1UOeStzzKFrYSg,,,N,0,0,,,2014-04-05 12:27,2014-04-05 13:21,admin,admin,
796,140539,1749,36397,642,0,N,N,N,CP_Drtn,TT_Task,DT_FixedDUR2,TK_NotStart,BL1-MEP-AC-4F-2020,FCU's Installation,4457,1248,120,64,0,192,192,64,6000.055155,0,6000.055155,,,,2015-10-12 08:00,2015-10-19 16:00,,2015-05-05 08:00,2015-05-13 16:00,2015-05-05 08:00,2015-05-13 16:00,2015-05-05 08:00,2015-05-13 16:00,2015-10-12 08:00,2015-10-19 16:00,,PT_Normal,,,,,Yr3MnIR1jUOmMnlVSu9QCg,oM9/QV5mnU2bDEc3S0eBWg,,,N,0,0,,,2014-04-05 12:27,2014-04-05 13:21,admin,admin,
797,140540,1749,36397,642,0,N,N,N,CP_Drtn,TT_Task,DT_FixedDUR2,TK_NotStart,BL1-MEP-AC-4F-2000,Chilled Water Pipes and Fittings Installation,4457,1000,0,168,0,840,840,168,5251.194852,0,5251.194852,,,,2015-09-11 08:00,2015-10-01 16:00,,2015-05-05 08:00,2015-05-28 16:00,2015-05-05 08:00,2015-05-28 16:00,2015-05-05 08:00,2015-05-28 16:00,2015-09-11 08:00,2015-10-01 16:00,,PT_Normal,,,,,S1Z4fpUAIEeyDowKQg/s6Q,fXz3Hw9WWkGVQL2BrbySTQ,,,N,0,0,,,2014-04-05 12:27,2014-04-05 13:21,admin,admin,
798,140541,1749,36397,642,0,N,N,N,CP_Drtn,TT_Task,DT_FixedDUR2,TK_NotStart,BL1-MEP-AC-4F-2030,Chilled Water Pipes Pressure Test,4457,1096,0,48,0,96,96,48,587.116683,0,587.116683,,,,2015-10-14 08:00,2015-10-19 16:00,,2015-05-30 08:00,2015-06-04 16:00,2015-05-30 08:00,2015-06-04 16:00,2015-05-30 08:00,2015-06-04 16:00,2015-10-14 08:00,2015-10-19 16:00,,PT_Normal,,,,,vDwsxwCJP0WlSPlyhY6z0w,rov5bZsP9keQSkYUDvFRPA,,,N,0,0,,,2014-04-05 12:27,2014-04-05 13:21,admin,admin,
799,140542,1749,36397,642,0,N,N,N,CP_Drtn,TT_Task,DT_FixedDUR2,TK_NotStart,BL1-MEP-AC-4F-2040,Chilled Water Pipes Insulation,4457,1624,88,96,0,384,384,96,1670.208495,0,1670.208495,,,,2015-12-25 08:00,2016-01-05 16:00,,2015-06-05 08:00,2015-06-16 16:00,2015-06-05 08:00,2015-06-16 16:00,2015-06-05 08:00,2015-06-16 16:00,2015-12-25 08:00,2016-01-05 16:00,,PT_Normal,,,,,MrJhuLOy0UCe8nOs9NUypw,i1tMMK/k3Emvng5nj6FuVA,,,N,0,0,,,2014-04-05 12:27,2014-04-05 13:21,admin,admin,
800,140543,1749,36397,642,0,N,N,N,CP_Drtn,TT_Task,DT_FixedDUR2,TK_NotStart,BL1-MEP-AC-4F-2050,Valve Package Installation,4457,1096,0,48,0,96,96,48,2386.490429,0,2386.490429,,,,2015-10-20 08:00,2015-10-25 16:00,,2015-06-05 08:00,2015-06-10 16:00,2015-06-05 08:00,2015-06-10 16:00,2015-06-05 08:00,2015-06-10 16:00,2015-10-20 08:00,2015-10-25 16:00,,PT_Normal,,,,,2PwCgItZ+kCR6s6KSUvN4g,N5MEvYXK3UCBX0RJzhH/JQ,,,N,0,0,,,2014-04-05 12:27,2014-04-05 13:21,admin,admin,
801,140544,1749,36397,642,0,N,N,N,CP_Drtn,TT_Task,DT_FixedDUR2,TK_NotStart,BL1-MEP-AC-4F-2060,FCU's Drain Pipes Installation,4457,1096,160,24,0,48,48,24,519.927167,0,519.927167,,,,2015-10-26 08:00,2015-10-28 16:00,,2015-06-11 08:00,2015-06-13 16:00,2015-06-11 08:00,2015-06-13 16:00,2015-06-11 08:00,2015-06-13 16:00,2015-10-26 08:00,2015-10-28 16:00,,PT_Normal,,,,,UNzWxM7nNEmjlDVDjH3f8Q,nCnBEP21hEuvx+1F01sRDA,,,N,0,0,,,2014-04-05 12:27,2014-04-05 13:21,admin,admin,
802,140545,1749,36398,642,0,N,N,N,CP_Drtn,TT_Task,DT_FixedDUR2,TK_NotStart,BL1-MEP-AC-4F-1000,Supports and Hungers Fixing,,1144,88,96,0,192,192,96,338.467259,0,338.467259,,,,2015-08-30 08:00,2015-09-10 16:00,,2015-03-31 08:00,2015-04-13 16:00,2015-03-31 08:00,2015-04-13 16:00,2015-03-31 08:00,2015-04-13 16:00,2015-08-30 08:00,2015-09-10 16:00,,PT_Normal,,,,,ZtmDA886kUWipvVOb+jL/w,bjuV5CuHN0aBpRiJ7wDubQ,,,N,0,0,,,2014-04-05 12:27,2014-04-05 13:21,admin,admin,
803,140546,1749,36369,642,0,N,N,N,CP_Drtn,TT_Task,DT_FixedDUR2,TK_NotStart,BL1-MEP-AC-4F-3000,Grills and Diffusers Fixing,,1472,80,96,0,384,384,96,11550.608192,0,11550.608192,,,,2016-01-12 08:00,2016-01-23 16:00,,2015-07-12 08:00,2015-07-23 16:00,2015-07-12 08:00,2015-07-23 16:00,2015-07-12 08:00,2015-07-23 16:00,2016-01-12 08:00,2016-01-23 16:00,,PT_Normal,,,,,qleFaRGV9kCj+VR+V9j/Lg,Y+L8T+upGESRuOv6ozE63Q,,,N,0,0,,,2014-04-05 12:27,2014-04-05 13:21,admin,admin,
804,140547,1749,36510,642,0,N,N,N,CP_Drtn,TT_Task,DT_FixedDUR2,TK_NotStart,BL1-MEP-FF-4F-3000,Fire Extinguisher Installation,,1360,168,16,0,8,8,16,1076.993507,0,1076.993507,,,,2016-02-11 08:00,2016-02-12 16:00,,2015-08-25 08:00,2015-08-26 16:00,2015-08-25 08:00,2015-08-26 16:00,2015-08-25 08:00,2015-08-26 16:00,2016-02-11 08:00,2016-02-12 16:00,,PT_Normal,,,,,0hos6QkLLEKIiIlzG8DEgg,WO3D+S3DBkOu2U6/SHN+ww,,,N,0,0,,,2014-04-05 12:27,2014-04-05 13:21,admin,admin,
805,140548,1749,36510,642,0,N,N,N,CP_Drtn,TT_Task,DT_FixedDUR2,TK_NotStart,BL1-MEP-FF-4F-3010,Hose reel Cabinet Installation and Connection,,1496,8,48,0,192,192,48,1336.852298,0,1336.852298,,,,2016-01-30 08:00,2016-02-04 16:00,,2015-07-27 08:00,2015-08-01 16:00,2015-07-27 08:00,2015-08-01 16:00,2015-07-27 08:00,2015-08-01 16:00,2016-01-30 08:00,2016-02-04 16:00,,PT_Normal,,,,,Rtbs7TJK3E63REcQLKNrmw,kEUOkiXoq0KUlFwjvRaHYQ,,,N,0,0,,,2014-04-05 12:27,2014-04-05 13:21,admin,admin,
806,140549,1749,36135,642,0,N,N,N,CP_Drtn,TT_Task,DT_FixedDUR2,TK_NotStart,BL1-MEP-EL-4F-3020,Lights Fitting Fixing,,1240,0,112,0,244,244,112,7336.659378,0,7336.659378,,,,2015-12-26 08:00,2016-01-08 16:00,,2015-07-24 08:00,2015-08-06 16:00,2015-07-24 08:00,2015-08-06 16:00,2015-07-24 08:00,2015-08-06 16:00,2015-12-26 08:00,2016-01-08 16:00,,PT_Normal,,,,,Mwc0vIGqSE+z7bfKa18/Vw,7/zjNq04HkaElru8f/a+VQ,,,N,0,0,,,2014-04-05 12:27,2014-04-05 13:21,admin,admin,
807,140550,1749,36135,642,0,N,N,N,CP_Drtn,TT_Task,DT_FixedDUR2,TK_NotStart,BL1-MEP-EL-4F-3050,Sockets and Switches Fixing,,1536,120,64,0,128,128,64,1174.957134,0,1174.957134,,,,2016-01-19 08:00,2016-01-26 16:00,,2015-07-11 08:00,2015-07-18 16:00,2015-07-11 08:00,2015-07-18 16:00,2015-07-11 08:00,2015-07-18 16:00,2016-01-19 08:00,2016-01-26 16:00,,PT_Normal,,,,,J5tV/tWOgEmKHrmABRXMZQ,8g7T/e4rtEyAZHpyZfMZRQ,,,N,0,0,,,2014-04-05 12:27,2014-04-05 13:21,admin,admin,
808,140551,1749,36135,642,0,N,N,N,CP_Drtn,TT_Task,DT_FixedDUR2,TK_NotStart,BL1-MEP-EL-4F-3000,Emergency Light Fixing,,1600,120,64,0,128,128,64,5722.024623,0,5722.024623,,,,2016-01-27 08:00,2016-02-03 16:00,,2015-07-11 08:00,2015-07-18 16:00,2015-07-11 08:00,2015-07-18 16:00,2015-07-11 08:00,2015-07-18 16:00,2016-01-27 08:00,2016-02-03 16:00,,PT_Normal,,,,,sHwED2NRuEWoDmnPvRIXqQ,JTGyzWFJA0OCGi6w4ND8ow,,,N,0,0,,,2014-04-05 12:27,2014-04-05 13:21,admin,admin,
809,140552,1749,36135,642,0,N,N,N,CP_Drtn,TT_Task,DT_FixedDUR2,TK_NotStart,BL1-MEP-EL-4F-3010,Fire Alarm System Detector Installation,,1408,88,96,0,192,192,96,4046.378277,0,4046.378277,,,,2016-01-03 08:00,2016-01-14 16:00,,2015-07-11 08:00,2015-07-22 16:00,2015-07-11 08:00,2015-07-22 16:00,2015-07-11 08:00,2015-07-22 16:00,2016-01-03 08:00,2016-01-14 16:00,,PT_Normal,,,,,Jfz/0qPWXk6xkmlXEW1cDA,cfu6iPU62kq352yVRKG4Xg,,,N,0,0,,,2014-04-05 12:27,2014-04-05 13:21,admin,admin,
810,140553,1749,36135,642,0,N,N,N,CP_Drtn,TT_Task,DT_FixedDUR2,TK_NotStart,BL1-MEP-EL-4F-3070,SMDB's  Termination and Final Connection,,1512,136,48,0,192,192,48,2791.825001,0,2791.825001,,,,2016-01-16 08:00,2016-01-21 16:00,,2015-07-11 08:00,2015-07-16 16:00,2015-07-11 08:00,2015-07-16 16:00,2015-07-11 08:00,2015-07-16 16:00,2016-01-16 08:00,2016-01-21 16:00,,PT_Normal,,,,,pbxfuNN7Fk228MwVHBJjVQ,WT8SUgUZt06kphDdLxd8jA,,,N,0,0,,,2014-04-05 12:27,2014-04-05 13:21,admin,admin,
811,140554,1749,36069,642,0,N,N,N,CP_Drtn,TT_Task,DT_FixedDUR2,TK_NotStart,BL1-MEP-EL-4F-3060,Power Cable Puling,,1376,72,112,0,168,168,112,6375.759893,0,6375.759893,,,,2015-11-24 08:00,2015-12-07 16:00,,2015-06-05 08:00,2015-06-18 16:00,2015-06-05 08:00,2015-06-18 16:00,2015-06-05 08:00,2015-06-18 16:00,2015-11-24 08:00,2015-12-07 16:00,,PT_Normal,,,,,F1WtJ4z2jUG1Uj9uzhZg+w,u16sdN6ikke3s5HuA3NfoQ,,,N,0,0,,,2014-04-05 12:27,2014-04-05 13:21,admin,admin,
812,140555,1749,36135,642,0,N,N,N,CP_Drtn,TT_Task,DT_FixedDUR2,TK_NotStart,BL1-MEP-EL-4F-3030,Despature for Low Current  System Installation,4455,1376,0,112,0,336,336,112,72752.164276,0,72752.164276,,,,2015-12-30 08:00,2016-01-12 16:00,,2015-07-11 08:00,2015-07-24 16:00,2015-07-11 08:00,2015-07-24 16:00,2015-07-11 08:00,2015-07-24 16:00,2015-12-30 08:00,2016-01-12 16:00,,PT_Normal,,,,,aHSmV7iNCk+AU1l0a2Ty8g,AMg8s6L0rka6z/KOfQrzPQ,,,N,0,0,,,2014-04-05 12:27,2014-04-05 13:21,admin,admin,
813,140556,1749,36135,642,0,N,N,N,CP_Drtn,TT_Task,DT_FixedDUR2,TK_NotStart,BL1-MEP-EL-4F-3040,Low Current  System Outlet installation and Connection,4455,1568,208,80,0,80,80,80,3870.787498,0,3870.787498,,,,2016-02-06 08:00,2016-02-15 16:00,,2015-07-25 08:00,2015-08-03 16:00,2015-07-25 08:00,2015-08-03 16:00,2015-07-25 08:00,2015-08-03 16:00,2016-02-06 08:00,2016-02-15 16:00,,PT_Normal,,,,,mYJYMTubX0CuqZMxUetFvw,yLzixuzmg0WQgGdofEx47g,,,N,0,0,,,2014-04-05 12:27,2014-04-05 13:21,admin,admin,
814,140557,1749,36276,642,0,N,N,N,CP_Drtn,TT_Task,DT_FixedDUR2,TK_NotStart,BL1-MEP-EL-4F-1000,PVC Back Boxes and Conduits  Fixing in Wall,,856,72,96,0,384,384,96,3319.67233,0,3319.67233,,,,2015-07-16 08:00,2015-07-27 16:00,,2015-03-21 08:00,2015-04-02 16:00,2015-03-21 08:00,2015-04-02 16:00,2015-03-21 08:00,2015-04-02 16:00,2015-07-16 08:00,2015-07-27 16:00,,PT_Normal,,,,,0Yx9+SlCXk2KUPq6n7Hcug,Z0T2ku24bU62FBqh3stK2Q,,,N,0,0,,,2014-04-05 12:27,2014-04-05 13:21,admin,admin,
815,140558,1749,36276,642,0,N,N,N,CP_Drtn,TT_Task,DT_FixedDUR2,TK_NotStart,BL1-MEP-EL-4F-1010,DB's Inclosure Fixing,4455,976,48,48,0,96,96,48,2136.399392,0,2136.399392,,,,2015-08-09 08:00,2015-08-14 16:00,,2015-03-31 08:00,2015-04-06 16:00,2015-03-31 08:00,2015-04-06 16:00,2015-03-31 08:00,2015-04-06 16:00,2015-08-09 08:00,2015-08-14 16:00,,PT_Normal,,,,,N2zoBPV9p0WoGsgNNGamvQ,9XUtOxEhWECrcPuKMqx8lA,,,N,0,0,,,2014-04-05 12:27,2014-04-05 13:21,admin,admin,
816,140559,1749,36069,642,0,N,N,N,CP_Drtn,TT_Task,DT_FixedDUR2,TK_NotStart,BL1-MEP-EL-4F-2030,SMDB's  Installation,,1848,136,48,0,45,45,48,4202.598932,0,4202.598932,,,,2016-01-10 08:00,2016-01-15 16:00,,2015-05-23 08:00,2015-05-28 16:00,2015-05-23 08:00,2015-05-28 16:00,2015-05-23 08:00,2015-05-28 16:00,2016-01-10 08:00,2016-01-15 16:00,,PT_Normal,,,,,4ZNvlpAD3kegmE5D8+rvRg,drWkh43A9kaQRF++uHkmBw,,,N,0,0,,,2014-04-05 12:27,2014-04-05 13:21,admin,admin,
817,140560,1749,36069,642,0,N,N,N,CP_Drtn,TT_Task,DT_FixedDUR2,TK_NotStart,BL1-MEP-EL-4F-2040,Lighting  Wiring,,1288,88,96,0,241.713,241.713,96,3578.08423,0,3578.08423,,,,2015-10-17 08:00,2015-10-28 16:00,,2015-05-05 08:00,2015-05-18 16:00,2015-05-05 08:00,2015-05-18 16:00,2015-05-05 08:00,2015-05-18 16:00,2015-10-17 08:00,2015-10-28 16:00,,PT_Normal,,,,,ApApx3T790uuGAmkhM2kfQ,d8HAj67gJEW4qtSl0IOrjA,,,N,0,0,,,2014-04-05 12:27,2014-04-05 13:21,admin,admin,
818,140561,1749,36069,642,0,N,N,N,CP_Drtn,TT_Task,DT_FixedDUR2,TK_NotStart,BL1-MEP-EL-4F-2050,Power Points Wiring,,1192,24,96,0,192,192,96,2906.213289,0,2906.213289,,,,2015-10-05 08:00,2015-10-16 16:00,,2015-05-05 08:00,2015-05-18 16:00,2015-05-05 08:00,2015-05-18 16:00,2015-05-05 08:00,2015-05-18 16:00,2015-10-05 08:00,2015-10-16 16:00,,PT_Normal,,,,,J9uL+yzLH0mBV/6jFa3wMw,KhP6L2XqsUmlYrnJRJJuIQ,,,N,0,0,,,2014-04-05 12:27,2014-04-05 13:21,admin,admin,
819,140562,1749,36069,642,0,N,N,N,CP_Drtn,TT_Task,DT_FixedDUR2,TK_NotStart,BL1-MEP-EL-4F-2000,Cable Tray and Trunking Installation,,1272,72,112,0,336,336,112,9078.448617,0,9078.448617,,,,2015-10-15 08:00,2015-10-28 16:00,,2015-05-05 08:00,2015-05-20 16:00,2015-05-05 08:00,2015-05-20 16:00,2015-05-05 08:00,2015-05-20 16:00,2015-10-15 08:00,2015-10-28 16:00,,PT_Normal,,,,,7fiikj3/LEGuiTfIZfXPPQ,OPsmVpbanEC9ReMV0B6uBw,,,N,0,0,,,2014-04-05 12:27,2014-04-05 13:21,admin,admin,
820,140563,1749,36069,642,0,N,N,N,CP_Drtn,TT_Task,DT_FixedDUR2,TK_NotStart,BL1-MEP-EL-4F-2060,Emergency Light Wiring,,1320,120,64,0,128,128,64,1210.028798,0,1210.028798,,,,2015-10-21 08:00,2015-10-28 16:00,,2015-05-05 08:00,2015-05-13 16:00,2015-05-05 08:00,2015-05-13 16:00,2015-05-05 08:00,2015-05-13 16:00,2015-10-21 08:00,2015-10-28 16:00,,PT_Normal,,,,,bKnjgVwA7kqf6JUucnSUUQ,XMConLhfZ0OxGGdpTZAFzQ,,,N,0,0,,,2014-04-05 12:27,2014-04-05 13:21,admin,admin,
821,140564,1749,36069,642,0,N,N,N,CP_Drtn,TT_Task,DT_FixedDUR2,TK_NotStart,BL1-MEP-EL-4F-2010,Fire Alarm System Wiring,,1288,88,96,0,192,192,96,7123.009694,0,7123.009694,,,,2015-10-17 08:00,2015-10-28 16:00,,2015-05-05 08:00,2015-05-18 16:00,2015-05-05 08:00,2015-05-18 16:00,2015-05-05 08:00,2015-05-18 16:00,2015-10-17 08:00,2015-10-28 16:00,,PT_Normal,,,,,6+UQ3RP5KEWdLNL9wdmDVg,w++B/0ZuJU++NTkJr+zo7A,,,N,0,0,,,2014-04-05 12:27,2014-04-05 13:21,admin,admin,
822,140565,1749,36069,642,0,N,N,N,CP_Drtn,TT_Task,DT_FixedDUR2,TK_NotStart,BL1-MEP-EL-4F-2070,DB's Installation and Termination,4455,1168,0,96,0,288,288,96,4982.925025,0,4982.925025,,,,2015-10-17 08:00,2015-10-28 16:00,,2015-05-23 08:00,2015-06-04 16:00,2015-05-23 08:00,2015-06-04 16:00,2015-05-23 08:00,2015-06-04 16:00,2015-10-17 08:00,2015-10-28 16:00,,PT_Normal,,,,,6X+3r6meE0ePGbxo9/BNNg,YjWVWBzVaEadcfrgva5+uQ,,,N,0,0,,,2014-04-05 12:27,2014-04-05 13:21,admin,admin,
823,140566,1749,36069,642,0,N,N,N,CP_Drtn,TT_Task,DT_FixedDUR2,TK_NotStart,BL1-MEP-EL-4F-2020,Low Current  System Wiring,4455,1768,392,112,0,244,244,112,38231.783306,0,38231.783306,,,,2015-12-16 08:00,2015-12-29 16:00,,2015-05-05 08:00,2015-05-20 16:00,2015-05-05 08:00,2015-05-20 16:00,2015-05-05 08:00,2015-05-20 16:00,2015-12-16 08:00,2015-12-29 16:00,,PT_Normal,,,,,iGBQrosp0kurNnUlmE5bQQ,Qnq2SAs+yk6j74qB727NXg,,,N,0,0,,,2014-04-05 12:27,2014-04-05 13:21,admin,admin,
824,140567,1749,36252,642,0,N,N,N,CP_Drtn,TT_Task,DT_FixedDUR2,TK_NotStart,BL1-MEP-EL-6F-1000,PVC Back Boxes and Conduits  Fixing in Wall,,768,40,96,0,384,384,96,3319.67233,0,3319.67233,,,,2015-08-09 08:00,2015-08-20 16:00,,2015-04-30 08:00,2015-05-13 16:00,2015-04-30 08:00,2015-05-13 16:00,2015-04-30 08:00,2015-05-13 16:00,2015-08-09 08:00,2015-08-20 16:00,,PT_Normal,,,,,jWHw4BiOHkardCKaAkgfSQ,fR1cjk32lkO12smQN26WTw,,,N,0,0,,,2014-04-05 12:27,2014-04-05 13:21,admin,admin,
825,140568,1749,36252,642,0,N,N,N,CP_Drtn,TT_Task,DT_FixedDUR2,TK_NotStart,BL1-MEP-EL-6F-1010,DB's Inclosure Fixing,4455,952,48,48,0,96,96,48,2136.399392,0,2136.399392,,,,2015-09-10 08:00,2015-09-15 16:00,,2015-05-11 08:00,2015-05-17 16:00,2015-05-11 08:00,2015-05-17 16:00,2015-05-11 08:00,2015-05-17 16:00,2015-09-10 08:00,2015-09-15 16:00,,PT_Normal,,,,,aiM21c/8uE+n+thDVh0FEg,NMezxAwLjkCm3oGOzgfO+A,,,N,0,0,,,2014-04-05 12:27,2014-04-05 13:21,admin,admin,
826,140569,1749,36294,642,0,N,N,N,CP_Drtn,TT_Task,DT_FixedDUR2,TK_NotStart,BL1-MEP-EL-6F-3020,Lights Fitting Fixing,,1240,0,112,0,244,244,112,7336.659378,0,7336.659378,,,,2016-01-23 08:00,2016-02-05 16:00,,2015-08-21 08:00,2015-09-03 16:00,2015-08-21 08:00,2015-09-03 16:00,2015-08-21 08:00,2015-09-03 16:00,2016-01-23 08:00,2016-02-05 16:00,,PT_Normal,,,,,6pfCYGB2bEujTQMG2Ap7dg,93J/KLPI+kitc+vMy3t6Xw,,,N,0,0,,,2014-04-05 12:27,2014-04-05 13:21,admin,admin,
827,140570,1749,36294,642,0,N,N,N,CP_Drtn,TT_Task,DT_FixedDUR2,TK_NotStart,BL1-MEP-EL-6F-3050,Sockets and Switches Fixing,,1400,0,64,0,128,128,64,1174.957134,0,1174.957134,,,,2016-02-04 08:00,2016-02-11 16:00,,2015-08-13 08:00,2015-08-20 16:00,2015-08-13 08:00,2015-08-20 16:00,2015-08-13 08:00,2015-08-20 16:00,2016-02-04 08:00,2016-02-11 16:00,,PT_Normal,,,,,o8ZkuZRjOU+SThvPnjx6aQ,2kKyDnvXAUud8nto+XWmRw,,,N,0,0,,,2014-04-05 12:27,2014-04-05 13:21,admin,admin,
828,140571,1749,36294,642,0,N,N,N,CP_Drtn,TT_Task,DT_FixedDUR2,TK_NotStart,BL1-MEP-EL-6F-3000,Emergency Light Fixing,,1464,376,64,0,128,128,64,5722.024623,0,5722.024623,,,,2016-02-12 08:00,2016-02-19 16:00,,2015-08-13 08:00,2015-08-20 16:00,2015-08-13 08:00,2015-08-20 16:00,2015-08-13 08:00,2015-08-20 16:00,2016-02-12 08:00,2016-02-19 16:00,,PT_Normal,,,,,Bg/lpoDlgUyHcN0wTa7HcA,PkL5OGCVcEiryGHHaK3YkQ,,,N,0,0,,,2014-04-05 12:27,2014-04-05 13:21,admin,admin,
829,140572,1749,36294,642,0,N,N,N,CP_Drtn,TT_Task,DT_FixedDUR2,TK_NotStart,BL1-MEP-EL-6F-3010,Fire Alarm System Detector Installation,,1320,0,96,0,192,192,96,4046.378277,0,4046.378277,,,,2016-01-27 08:00,2016-02-07 16:00,,2015-08-15 08:00,2015-08-26 16:00,2015-08-15 08:00,2015-08-26 16:00,2015-08-15 08:00,2015-08-26 16:00,2016-01-27 08:00,2016-02-07 16:00,,PT_Normal,,,,,jORjEzupXE6naqYDYUjtIg,iMKtoQg5LUuQti8ifiHmXA,,,N,0,0,,,2014-04-05 12:27,2014-04-05 13:21,admin,admin,
830,140573,1749,36294,642,0,N,N,N,CP_Drtn,TT_Task,DT_FixedDUR2,TK_NotStart,BL1-MEP-EL-6F-3070,SMDB's  Termination and Final Connection,,1344,16,48,0,192,192,48,2791.825001,0,2791.825001,,,,2016-01-28 08:00,2016-02-02 16:00,,2015-08-13 08:00,2015-08-18 16:00,2015-08-13 08:00,2015-08-18 16:00,2015-08-13 08:00,2015-08-18 16:00,2016-01-28 08:00,2016-02-02 16:00,,PT_Normal,,,,,tz/hc3yll0yOtXpTVHdL3g,XdnDLMEbKkG6eKUQeNnlQA,,,N,0,0,,,2014-04-05 12:27,2014-04-05 13:21,admin,admin,
831,140574,1749,36195,642,0,N,N,N,CP_Drtn,TT_Task,DT_FixedDUR2,TK_NotStart,BL1-MEP-EL-6F-3060,Power Cable Puling,,1304,96,112,0,168,168,112,6375.759893,0,6375.759893,,,,2015-12-22 08:00,2016-01-04 16:00,,2015-07-12 08:00,2015-07-25 16:00,2015-07-12 08:00,2015-07-25 16:00,2015-07-12 08:00,2015-07-25 16:00,2015-12-22 08:00,2016-01-04 16:00,,PT_Normal,,,,,Bop1NT+8OU2h5oRqDncP1Q,L2PAdCx+4Uq5J/RKoQefkg,,,N,0,0,,,2014-04-05 12:27,2014-04-05 13:21,admin,admin,
832,140575,1749,36294,642,0,N,N,N,CP_Drtn,TT_Task,DT_FixedDUR2,TK_NotStart,BL1-MEP-EL-6F-3030,Despature for Low Current  System Installation,4455,1304,0,112,0,336,336,112,72752.164276,0,72752.164276,,,,2016-01-27 08:00,2016-02-09 16:00,,2015-08-17 08:00,2015-08-30 16:00,2015-08-17 08:00,2015-08-30 16:00,2015-08-17 08:00,2015-08-30 16:00,2016-01-27 08:00,2016-02-09 16:00,,PT_Normal,,,,,4tddv+RWVUqh/vNZspHVQA,JRkecVyM50iat2WVUdFuUA,,,N,0,0,,,2014-04-05 12:27,2014-04-05 13:21,admin,admin,
833,140576,1749,36294,642,0,N,N,N,CP_Drtn,TT_Task,DT_FixedDUR2,TK_NotStart,BL1-MEP-EL-6F-3040,Low Current  System Outlet installation and Connection,4455,1304,216,80,0,80,80,80,3870.787498,0,3870.787498,,,,2016-02-10 08:00,2016-02-19 16:00,,2015-08-31 08:00,2015-09-09 16:00,2015-08-31 08:00,2015-09-09 16:00,2015-08-31 08:00,2015-09-09 16:00,2016-02-10 08:00,2016-02-19 16:00,,PT_Normal,,,,,gqp+z0XgAUG5a2zm3LpqEA,wTN0Y8Pa9ka3YBhcwB7VsQ,,,N,0,0,,,2014-04-05 12:27,2014-04-05 13:21,admin,admin,
834,140577,1749,36195,642,0,N,N,N,CP_Drtn,TT_Task,DT_FixedDUR2,TK_NotStart,BL1-MEP-EL-6F-2060,SMDB's  Installation,,1680,16,48,0,45,45,48,4202.598932,0,4202.598932,,,,2016-01-22 08:00,2016-01-27 16:00,,2015-06-26 08:00,2015-07-01 16:00,2015-06-26 08:00,2015-07-01 16:00,2015-06-26 08:00,2015-07-01 16:00,2016-01-22 08:00,2016-01-27 16:00,,PT_Normal,,,,,HxLF4RQhj0SrKvvZzJruCA,0G8mPecLGkSPzkLeVOeqDw,,,N,0,0,,,2014-04-05 12:27,2014-04-05 13:21,admin,admin,
835,140578,1749,36195,642,0,N,N,N,CP_Drtn,TT_Task,DT_FixedDUR2,TK_NotStart,BL1-MEP-EL-6F-2000,Lighting  Wiring,,1248,0,96,0,241.713,241.713,96,3578.08423,0,3578.08423,,,,2015-11-16 08:00,2015-11-27 16:00,,2015-06-13 08:00,2015-06-24 16:00,2015-06-13 08:00,2015-06-24 16:00,2015-06-13 08:00,2015-06-24 16:00,2015-11-16 08:00,2015-11-27 16:00,,PT_Normal,,,,,QMMU0HsNvk+7wPF2soZP8Q,axOQeGj3w0WBxTzR7lfPkw,,,N,0,0,,,2014-04-05 12:27,2014-04-05 13:21,admin,admin,
836,140579,1749,36195,642,0,N,N,N,CP_Drtn,TT_Task,DT_FixedDUR2,TK_NotStart,BL1-MEP-EL-6F-2010,Power Points Wiring,,1152,0,96,0,192,192,96,2906.213289,0,2906.213289,,,,2015-11-04 08:00,2015-11-15 16:00,,2015-06-13 08:00,2015-06-24 16:00,2015-06-13 08:00,2015-06-24 16:00,2015-06-13 08:00,2015-06-24 16:00,2015-11-04 08:00,2015-11-15 16:00,,PT_Normal,,,,,3sXCTwo/F0207TgjI12G5A,h5n5OvoOXEO/K0KWRwgwRQ,,,N,0,0,,,2014-04-05 12:27,2014-04-05 13:21,admin,admin,
837,140580,1749,36195,642,0,N,N,N,CP_Drtn,TT_Task,DT_FixedDUR2,TK_NotStart,BL1-MEP-EL-6F-2020,Cable Tray and Trunking Installation,,1216,104,112,0,336,336,112,9078.448617,0,9078.448617,,,,2015-11-14 08:00,2015-11-27 16:00,,2015-06-15 08:00,2015-06-28 16:00,2015-06-15 08:00,2015-06-28 16:00,2015-06-15 08:00,2015-06-28 16:00,2015-11-14 08:00,2015-11-27 16:00,,PT_Normal,,,,,RS+ADAq1cE+WwmJT1SJlwQ,Aeh714TlWUOcr6o8uCMUAQ,,,N,0,0,,,2014-04-05 12:27,2014-04-05 13:21,admin,admin,
838,140581,1749,36195,642,0,N,N,N,CP_Drtn,TT_Task,DT_FixedDUR2,TK_NotStart,BL1-MEP-EL-6F-2050,Emergency Light Wiring,,1296,392,64,0,128,128,64,1210.028798,0,1210.028798,,,,2015-11-20 08:00,2015-11-27 16:00,,2015-06-11 08:00,2015-06-18 16:00,2015-06-11 08:00,2015-06-18 16:00,2015-06-11 08:00,2015-06-18 16:00,2015-11-20 08:00,2015-11-27 16:00,,PT_Normal,,,,,DAzZLbiIc0KyObBNG9rF2w,A3fSwqjiBES3rpiBuKcGAg,,,N,0,0,,,2014-04-05 12:27,2014-04-05 13:21,admin,admin,
839,140582,1749,36195,642,0,N,N,N,CP_Drtn,TT_Task,DT_FixedDUR2,TK_NotStart,BL1-MEP-EL-6F-2030,Fire Alarm System Wiring,,1248,0,96,0,192,192,96,7123.009694,0,7123.009694,,,,2015-11-16 08:00,2015-11-27 16:00,,2015-06-13 08:00,2015-06-24 16:00,2015-06-13 08:00,2015-06-24 16:00,2015-06-13 08:00,2015-06-24 16:00,2015-11-16 08:00,2015-11-27 16:00,,PT_Normal,,,,,L01aSwB+bUyYr/WCqrpISA,5Yf2qRaAzkCvs2NlDqYswA,,,N,0,0,,,2014-04-05 12:27,2014-04-05 13:21,admin,admin,
840,140583,1749,36195,642,0,N,N,N,CP_Drtn,TT_Task,DT_FixedDUR2,TK_NotStart,BL1-MEP-EL-6F-2070,DB's Installation and Termination,4455,1128,16,96,0,288,288,96,4982.925025,0,4982.925025,,,,2015-11-16 08:00,2015-11-27 16:00,,2015-06-28 08:00,2015-07-09 16:00,2015-06-28 08:00,2015-07-09 16:00,2015-06-28 08:00,2015-07-09 16:00,2015-11-16 08:00,2015-11-27 16:00,,PT_Normal,,,,,PN79QmlyLUGcaR97V8sIEQ,8l8CwtPDBEKmdVqqVxLyyw,,,N,0,0,,,2014-04-05 12:27,2014-04-05 13:21,admin,admin,
841,140584,1749,36195,642,0,N,N,N,CP_Drtn,TT_Task,DT_FixedDUR2,TK_NotStart,BL1-MEP-EL-6F-2040,Low Current  System Wiring,4455,1728,424,112,0,244,244,112,38231.783306,0,38231.783306,,,,2016-01-13 08:00,2016-01-26 16:00,,2015-06-11 08:00,2015-06-24 16:00,2015-06-11 08:00,2015-06-24 16:00,2015-06-11 08:00,2015-06-24 16:00,2016-01-13 08:00,2016-01-26 16:00,,PT_Normal,,,,,crvhEhYYKUOBWQXSLTp8LA,j7ZJ8pRLK06+o1FJ+ycveQ,,,N,0,0,,,2014-04-05 12:27,2014-04-05 13:21,admin,admin,
842,140585,1749,36516,642,0,N,N,N,CP_Drtn,TT_Task,DT_FixedDUR2,TK_NotStart,BL1-MEP-FF-6F-3000,Fire Extinguisher Installation,,1088,408,16,0,8,8,16,1076.993507,0,1076.993507,,,,2016-02-15 08:00,2016-02-16 16:00,,2015-10-02 08:00,2015-10-03 16:00,2015-10-02 08:00,2015-10-03 16:00,2015-10-02 08:00,2015-10-03 16:00,2016-02-15 08:00,2016-02-16 16:00,,PT_Normal,,,,,50MxN1N46kq8GM9XZk0wAQ,u6aOyNU5BEuBQZwxDNJ92w,,,N,0,0,,,2014-04-05 12:27,2014-04-05 13:21,admin,admin,
843,140586,1749,36516,642,0,N,N,N,CP_Drtn,TT_Task,DT_FixedDUR2,TK_NotStart,BL1-MEP-FF-6F-3010,Hose reel Cabinet Installation and Connection,,1456,392,48,0,192,192,48,1336.852298,0,1336.852298,,,,2016-02-11 08:00,2016-02-16 16:00,,2015-08-13 08:00,2015-08-18 16:00,2015-08-13 08:00,2015-08-18 16:00,2015-08-13 08:00,2015-08-18 16:00,2016-02-11 08:00,2016-02-16 16:00,,PT_Normal,,,,,rr3DqyfEt0mUYF2Oe2bUQA,LnD3cxE3BU6SH14h5piOdA,,,N,0,0,,,2014-04-05 12:27,2014-04-05 13:21,admin,admin,
844,140587,1749,36418,642,0,N,N,N,CP_Drtn,TT_Task,DT_FixedDUR2,TK_NotStart,BL1-MEP-PL-6F-3000,Sanitary Ware Installation Including Connection,,864,0,112,0,383.862,383.862,112,4453.516455,0,4453.516455,,,,2016-01-03 08:00,2016-01-16 16:00,,2015-09-17 08:00,2015-09-30 16:00,2015-09-17 08:00,2015-09-30 16:00,2015-09-17 08:00,2015-09-30 16:00,2016-01-03 08:00,2016-01-16 16:00,,PT_Normal,,,,,b4KaltFhoEC0D3RgB2EIug,PXqaVwAiOEq9tXh3nEzSLQ,,,N,0,0,,,2014-04-05 12:27,2014-04-05 13:21,admin,admin,
845,140588,1749,36418,642,0,N,N,N,CP_Drtn,TT_Task,DT_FixedDUR2,TK_NotStart,BL1-MEP-PL-6F-3010,Sanitary Ware Accessories Installation,,864,0,48,0,36.45,36.45,48,166.215378,0,166.215378,,,,2016-01-17 08:00,2016-01-22 16:00,,2015-10-01 08:00,2015-10-06 16:00,2015-10-01 08:00,2015-10-06 16:00,2015-10-01 08:00,2015-10-06 16:00,2016-01-17 08:00,2016-01-22 16:00,,PT_Normal,,,,,q7TjNgPJBkKGWZNpqRD2Qw,HWXWujy/00mGzPT1CH9ujw,,,N,0,0,,,2014-04-05 12:27,2014-04-05 13:21,admin,admin,
846,140589,1749,36419,642,0,N,N,N,CP_Drtn,TT_Task,DT_FixedDUR2,TK_NotStart,BL1-MEP-PL-6F-2020,High Level Water Supply Pipes and Fittings Installation,,1056,0,168,0,150.02,150.02,168,1329.597866,0,1329.597866,,,,2015-11-01 08:00,2015-11-21 16:00,,2015-06-22 08:00,2015-07-12 16:00,2015-06-22 08:00,2015-07-12 16:00,2015-06-22 08:00,2015-07-12 16:00,2015-11-01 08:00,2015-11-21 16:00,,PT_Normal,,,,,7fv7ozYbrEKXi5Yf6zTHXA,LixjxvMGgUeG63Kg8/kf3w,,,N,0,0,,,2014-04-05 12:27,2014-04-05 13:21,admin,admin,
847,140590,1749,36419,642,0,N,N,N,CP_Drtn,TT_Task,DT_FixedDUR2,TK_NotStart,BL1-MEP-PL-6F-2000,High Level Drainage Pipes Installation,,1056,0,168,0,244.38,244.38,168,6583.525267,0,6583.525267,,,,2015-11-01 08:00,2015-11-21 16:00,,2015-06-22 08:00,2015-07-12 16:00,2015-06-22 08:00,2015-07-12 16:00,2015-06-22 08:00,2015-07-12 16:00,2015-11-01 08:00,2015-11-21 16:00,,PT_Normal,,,,,tS6fDds41ESjvia7cZ2cXg,KUN1+kiwG0+xlx+V4bYiJQ,,,N,0,0,,,2014-04-05 12:27,2014-04-05 13:21,admin,admin,
848,140591,1749,36419,642,0,N,N,N,CP_Drtn,TT_Task,DT_FixedDUR2,TK_NotStart,BL1-MEP-PL-6F-2030,Water Supply Pipes Pressure Test,4456,1056,152,48,0,48,48,48,151.744312,0,151.744312,,,,2015-11-22 08:00,2015-11-27 16:00,,2015-07-13 08:00,2015-07-18 16:00,2015-07-13 08:00,2015-07-18 16:00,2015-07-13 08:00,2015-07-18 16:00,2015-11-22 08:00,2015-11-27 16:00,,PT_Normal,,,,,Muig8qme30u+/BuYcMNgCA,S1EnQIgHLUG6ZTvDJd6/OQ,,,N,0,0,,,2014-04-05 12:27,2014-04-05 13:21,admin,admin,
849,140592,1749,36419,642,0,N,N,N,CP_Drtn,TT_Task,DT_FixedDUR2,TK_NotStart,BL1-MEP-PL-6F-2010,Drainage Pipes Gravity Test,,904,0,48,0,48,48,48,826.240719,0,826.240719,,,,2015-11-22 08:00,2015-11-27 16:00,,2015-08-01 08:00,2015-08-06 16:00,2015-08-01 08:00,2015-08-06 16:00,2015-08-01 08:00,2015-08-06 16:00,2015-11-22 08:00,2015-11-27 16:00,,PT_Normal,,,,,sThsc38NkkSjPqUIe5pkNA,5uTN7N0qrkOYC7cEdQUs3w,,,N,0,0,,,2014-04-05 12:27,2014-04-05 13:21,admin,admin,
850,140593,1749,36420,642,0,N,N,N,CP_Drtn,TT_Task,DT_FixedDUR2,TK_NotStart,BL1-MEP-PL-6F-1000,Low Level Water Supply Pipes Installation,,904,0,96,0,42,42,96,725.216846,0,725.216846,,,,2015-09-04 08:00,2015-09-15 16:00,,2015-05-11 08:00,2015-05-24 16:00,2015-05-11 08:00,2015-05-24 16:00,2015-05-11 08:00,2015-05-24 16:00,2015-09-04 08:00,2015-09-15 16:00,,PT_Normal,,,,,UydcZpNjTkKNjp2UgzzzZA,e4vpFjOx/U67y236eXn7/w,,,N,0,0,,,2014-04-05 12:27,2014-04-05 13:21,admin,admin,
851,140594,1749,36420,642,0,N,N,N,CP_Drtn,TT_Task,DT_FixedDUR2,TK_NotStart,BL1-MEP-PL-6F-1010,Low Level Drainage Pipes Installation,,904,0,96,0,12.67,12.67,96,2291.461713,0,2291.461713,,,,2015-09-04 08:00,2015-09-15 16:00,,2015-05-11 08:00,2015-05-24 16:00,2015-05-11 08:00,2015-05-24 16:00,2015-05-11 08:00,2015-05-24 16:00,2015-09-04 08:00,2015-09-15 16:00,,PT_Normal,,,,,jWrGzALgWUiOpPGCOTtRPg,oqQehskHQU2XNVZsaEjS3A,,,N,0,0,,,2014-04-05 12:27,2014-04-05 13:21,admin,admin,
852,140595,1749,36419,642,0,N,N,N,CP_Drtn,TT_Task,DT_FixedDUR2,TK_NotStart,BL1-MEP-PL-6F-1030,Floor Drain Installation,,904,0,48,0,6,6,48,554.143324,0,554.143324,,,,2015-11-16 08:00,2015-11-21 16:00,,2015-07-26 08:00,2015-07-31 16:00,2015-07-26 08:00,2015-07-31 16:00,2015-07-26 08:00,2015-07-31 16:00,2015-11-16 08:00,2015-11-21 16:00,,PT_Normal,,,,,PRHc0cdBvEO/mxqIrfVP+Q,3JePUkDGvESZc12O6sVwkw,,,N,0,0,,,2014-04-05 12:27,2014-04-05 13:21,admin,admin,
853,140596,1749,36420,642,0,N,N,N,CP_Drtn,TT_Task,DT_FixedDUR2,TK_NotStart,BL1-MEP-PL-6F-1020,Supports  installation for High level Pipes,,1272,216,96,0,16.352,16.352,96,831.682549,0,831.682549,,,,2015-10-20 08:00,2015-10-31 16:00,,2015-05-11 08:00,2015-05-24 16:00,2015-05-11 08:00,2015-05-24 16:00,2015-05-11 08:00,2015-05-24 16:00,2015-10-20 08:00,2015-10-31 16:00,,PT_Normal,,,,,faGV9YOTtEmGUKcyTecmYA,qi9OKjuW9kyI+l9xWLZWEg,,,N,0,0,,,2014-04-05 12:27,2014-04-05 13:21,admin,admin,
854,140597,1749,36422,642,0,N,N,N,CP_Drtn,TT_Task,DT_FixedDUR2,TK_NotStart,BL1-MEP-AC-6F-2020,Duct Installation and Insulation,4454,992,0,168,0,263,263,168,4350.939473,0,4350.939473,,,,2015-10-24 08:00,2015-11-13 16:00,,2015-06-22 08:00,2015-07-12 16:00,2015-06-22 08:00,2015-07-12 16:00,2015-06-22 08:00,2015-07-12 16:00,2015-10-24 08:00,2015-11-13 16:00,,PT_Normal,,,,,nmagc3KJXkWMM5/Ac3UjsQ,7+EMg9m8vUCXqM06hdCW8w,,,N,0,0,,,2014-04-05 12:27,2014-04-05 13:21,admin,admin,
855,140598,1749,36422,642,0,N,N,N,CP_Drtn,TT_Task,DT_FixedDUR2,TK_NotStart,BL1-MEP-AC-6F-2070,Duct Accessories Installation,4457,992,88,112,0,448,448,112,666.965527,0,666.965527,,,,2015-11-14 08:00,2015-11-27 16:00,,2015-07-13 08:00,2015-07-26 16:00,2015-07-13 08:00,2015-07-26 16:00,2015-07-13 08:00,2015-07-26 16:00,2015-11-14 08:00,2015-11-27 16:00,,PT_Normal,,,,,evqJvnohwESpId5aX0VNNg,5xUhjKhyCE6pJQsKUJCIaA,,,N,0,0,,,2014-04-05 12:27,2014-04-05 13:21,admin,admin,
856,140599,1749,36422,642,0,N,N,N,CP_Drtn,TT_Task,DT_FixedDUR2,TK_NotStart,BL1-MEP-AC-6F-2000,FCU's Installation,4457,1224,240,64,0,192,192,64,6000.055155,0,6000.055155,,,,2015-11-11 08:00,2015-11-18 16:00,,2015-06-11 08:00,2015-06-18 16:00,2015-06-11 08:00,2015-06-18 16:00,2015-06-11 08:00,2015-06-18 16:00,2015-11-11 08:00,2015-11-18 16:00,,PT_Normal,,,,,9APGjmtAcECnCI7iNaXZkA,78jcWJOl/Em/3fTX7cWYKg,,,N,0,0,,,2014-04-05 12:27,2014-04-05 13:21,admin,admin,
857,140600,1749,36422,642,0,N,N,N,CP_Drtn,TT_Task,DT_FixedDUR2,TK_NotStart,BL1-MEP-AC-6F-2010,Chilled Water Pipes and Fittings Installation,4457,984,0,168,0,840,840,168,5251.194852,0,5251.194852,,,,2015-10-23 08:00,2015-11-12 16:00,,2015-06-22 08:00,2015-07-12 16:00,2015-06-22 08:00,2015-07-12 16:00,2015-06-22 08:00,2015-07-12 16:00,2015-10-23 08:00,2015-11-12 16:00,,PT_Normal,,,,,fS+R+wTuAUqu1s9Loix19g,Irtc8E28oEuhBd5cfUCvSg,,,N,0,0,,,2014-04-05 12:27,2014-04-05 13:21,admin,admin,
858,140601,1749,36422,642,0,N,N,N,CP_Drtn,TT_Task,DT_FixedDUR2,TK_NotStart,BL1-MEP-AC-6F-2030,Chilled Water Pipes Pressure Test,4457,984,0,48,0,96,96,48,587.116683,0,587.116683,,,,2015-11-13 08:00,2015-11-18 16:00,,2015-07-13 08:00,2015-07-18 16:00,2015-07-13 08:00,2015-07-18 16:00,2015-07-13 08:00,2015-07-18 16:00,2015-11-13 08:00,2015-11-18 16:00,,PT_Normal,,,,,Q9F6W7wucESMa//VPk5i5g,NSEpYGmwYkSaHvXSa/ENUA,,,N,0,0,,,2014-04-05 12:27,2014-04-05 13:21,admin,admin,
859,140602,1749,36422,642,0,N,N,N,CP_Drtn,TT_Task,DT_FixedDUR2,TK_NotStart,BL1-MEP-AC-6F-2040,Chilled Water Pipes Insulation,4457,1464,544,96,0,384,384,96,1670.208495,0,1670.208495,,,,2016-01-18 08:00,2016-01-29 16:00,,2015-07-19 08:00,2015-07-30 16:00,2015-07-19 08:00,2015-07-30 16:00,2015-07-19 08:00,2015-07-30 16:00,2016-01-18 08:00,2016-01-29 16:00,,PT_Normal,,,,,0WwzTcgyE0SBqYf0qqYJUg,k2QxzXvVwkKeyeT+Jwn/OA,,,N,0,0,,,2014-04-05 12:27,2014-04-05 13:21,admin,admin,
860,140603,1749,36422,642,0,N,N,N,CP_Drtn,TT_Task,DT_FixedDUR2,TK_NotStart,BL1-MEP-AC-6F-2050,Valve Package Installation,4457,984,0,48,0,96,96,48,2386.490429,0,2386.490429,,,,2015-11-19 08:00,2015-11-24 16:00,,2015-07-19 08:00,2015-07-24 16:00,2015-07-19 08:00,2015-07-24 16:00,2015-07-19 08:00,2015-07-24 16:00,2015-11-19 08:00,2015-11-24 16:00,,PT_Normal,,,,,uS/bbyGwpU6DmY8rca6Kbg,P1iEgLrG3U6qJN92RJVUBg,,,N,0,0,,,2014-04-05 12:27,2014-04-05 13:21,admin,admin,
861,140604,1749,36422,642,0,N,N,N,CP_Drtn,TT_Task,DT_FixedDUR2,TK_NotStart,BL1-MEP-AC-6F-2060,FCU's Drain Pipes Installation,4457,984,80,24,0,48,48,24,519.927167,0,519.927167,,,,2015-11-25 08:00,2015-11-27 16:00,,2015-07-25 08:00,2015-07-27 16:00,2015-07-25 08:00,2015-07-27 16:00,2015-07-25 08:00,2015-07-27 16:00,2015-11-25 08:00,2015-11-27 16:00,,PT_Normal,,,,,NflxBqbq80ucAjjsxctj6A,gxgYtUBP6UaI1FD2x8pJyw,,,N,0,0,,,2014-04-05 12:27,2014-04-05 13:21,admin,admin,
862,140605,1749,36355,642,0,N,N,N,CP_Drtn,TT_Task,DT_FixedDUR2,TK_NotStart,BL1-MEP-AC-6F-1000,Supports and Hungers Fixing,,1200,128,96,0,192,192,96,338.467259,0,338.467259,,,,2015-10-11 08:00,2015-10-22 16:00,,2015-05-11 08:00,2015-05-24 16:00,2015-05-11 08:00,2015-05-24 16:00,2015-05-11 08:00,2015-05-24 16:00,2015-10-11 08:00,2015-10-22 16:00,,PT_Normal,,,,,XxdJqr7/20mliueMpRDXAQ,w1NSKmMOwEyHSvIPFE6y9w,,,N,0,0,,,2014-04-05 12:27,2014-04-05 13:21,admin,admin,
863,140606,1749,36424,642,0,N,N,N,CP_Drtn,TT_Task,DT_FixedDUR2,TK_NotStart,BL1-MEP-AC-6F-3000,Grills and Diffusers Fixing,,1392,328,96,0,384,384,96,11550.608192,0,11550.608192,,,,2016-02-05 08:00,2016-02-16 16:00,,2015-08-15 08:00,2015-08-26 16:00,2015-08-15 08:00,2015-08-26 16:00,2015-08-15 08:00,2015-08-26 16:00,2016-02-05 08:00,2016-02-16 16:00,,PT_Normal,,,,,I3dX6j8ln0WRCm21QJDrXA,nB37k8486Ey0/WEsZDWJAg,,,N,0,0,,,2014-04-05 12:27,2014-04-05 13:21,admin,admin,
864,140607,1749,36531,642,0,N,N,N,CP_Drtn,TT_Task,DT_FixedDUR2,TK_NotStart,BL1-MEP-AC-7F-2040,Duct Installation and Insulation and Final Connection,4454,744,0,240,0,960,960,240,5579.653981,0,5579.653981,,,,2015-12-03 08:00,2016-01-01 16:00,,2015-09-01 08:00,2015-09-30 16:00,2015-09-01 08:00,2015-09-30 16:00,2015-09-01 08:00,2015-09-30 16:00,2015-12-03 08:00,2016-01-01 16:00,,PT_Normal,,,,,QYUnM/KWzEOz/vfBL2UpdQ,Z9ybs9AgCkmPQRUZ0TZWZg,,,N,0,0,,,2014-04-05 12:27,2014-04-05 13:21,admin,admin,
865,140608,1749,36531,642,0,N,N,N,CP_Drtn,TT_Task,DT_FixedDUR2,TK_NotStart,BL1-MEP-AC-7F-2070,Extract and Fresh Fan's Installation,4457,744,16,200,0,800,800,200,130262.530688,0,130262.530688,,,,2016-01-02 08:00,2016-01-26 16:00,,2015-10-01 08:00,2015-10-25 16:00,2015-10-01 08:00,2015-10-25 16:00,2015-10-01 08:00,2015-10-25 16:00,2016-01-02 08:00,2016-01-26 16:00,,PT_Normal,,,,,8eXJjLAax0u6Zx9F4mkYmA,0nRsWu4oo0+54/yuRsxI/w,,,N,0,0,,,2014-04-05 12:27,2014-04-05 13:21,admin,admin,
866,140609,1749,36531,642,0,N,N,N,CP_Drtn,TT_Task,DT_FixedDUR2,TK_NotStart,BL1-MEP-AC-7F-2000,Heat Pumps Installation,4457,728,0,168,0,504,504,168,16527.215208,0,16527.215208,,,,2015-11-10 08:00,2015-11-30 16:00,,2015-08-11 08:00,2015-08-31 16:00,2015-08-11 08:00,2015-08-31 16:00,2015-08-11 08:00,2015-08-31 16:00,2015-11-10 08:00,2015-11-30 16:00,,PT_Normal,,,,,UiOeLQLJdECXJ3oBVFwljQ,2mDEMDpXBkGbAKqWwlLi7Q,,,N,0,0,,,2014-04-05 12:27,2014-04-05 13:21,admin,admin,
867,140610,1749,36531,642,0,N,N,N,CP_Drtn,TT_Task,DT_FixedDUR2,TK_NotStart,BL1-MEP-AC-7F-2050,Chilled Water Pipes and Fittings Installation and Final Connection,4457,728,0,240,0,960,960,240,14894.751805,0,14894.751805,,,,2015-12-01 08:00,2015-12-30 16:00,,2015-09-01 08:00,2015-09-30 16:00,2015-09-01 08:00,2015-09-30 16:00,2015-09-01 08:00,2015-09-30 16:00,2015-12-01 08:00,2015-12-30 16:00,,PT_Normal,,,,,bjk7kqsW+EqbI2QqyGw9zg,rKhYQtyKRE26JdcKmlkn2g,,,N,0,0,,,2014-04-05 12:27,2014-04-05 13:21,admin,admin,
868,140611,1749,36531,642,0,N,N,N,CP_Drtn,TT_Task,DT_FixedDUR2,TK_NotStart,BL1-MEP-AC-7F-2080,Chilled Water Pipes Pressure Test,4457,728,0,48,0,96,96,48,1657.634495,0,1657.634495,,,,2015-12-31 08:00,2016-01-05 16:00,,2015-10-01 08:00,2015-10-06 16:00,2015-10-01 08:00,2015-10-06 16:00,2015-10-01 08:00,2015-10-06 16:00,2015-12-31 08:00,2016-01-05 16:00,,PT_Normal,,,,,CljYd6O/uUasUymd1zIQGw,U4dRgy3wq0Ojikihg3tpNw,,,N,0,0,,,2014-04-05 12:27,2014-04-05 13:21,admin,admin,
869,140612,1749,36531,642,0,N,N,N,CP_Drtn,TT_Task,DT_FixedDUR2,TK_NotStart,BL1-MEP-AC-7F-2090,Chilled Water Pipes Insulation,4457,920,240,144,0,576,576,144,4735.505642,0,4735.505642,,,,2016-01-30 08:00,2016-02-16 16:00,,2015-10-07 08:00,2015-10-24 16:00,2015-10-07 08:00,2015-10-24 16:00,2015-10-07 08:00,2015-10-24 16:00,2016-01-30 08:00,2016-02-16 16:00,,PT_Normal,,,,,WgXw9ozXR0OEDMAaxc2pKA,Jr5y/fxY4EmeFrIUcq4M0w,,,N,0,0,,,2014-04-05 12:27,2014-04-05 13:21,admin,admin,
870,140613,1749,36531,642,0,N,N,N,CP_Drtn,TT_Task,DT_FixedDUR2,TK_NotStart,BL1-MEP-AC-7F-2100,Chilled Water Pumps Installation and Final Connection,4457,728,0,168,0,672,672,168,134332.270266,0,134332.270266,,,,2016-01-06 08:00,2016-01-26 16:00,,2015-10-07 08:00,2015-10-27 16:00,2015-10-07 08:00,2015-10-27 16:00,2015-10-07 08:00,2015-10-27 16:00,2016-01-06 08:00,2016-01-26 16:00,,PT_Normal,,,,,HVQYG5DpoUaIPFowbKCwZA,9aWgYkjzVUSq9zvgHIMKRw,,,N,0,0,,,2014-04-05 12:27,2014-04-05 13:21,admin,admin,
871,140614,1749,36531,642,0,N,N,N,CP_Drtn,TT_Task,DT_FixedDUR2,TK_NotStart,BL1-MEP-AC-7F-2010,AHU's Installation,4457,744,0,168,0,504,504,168,87539.94255,0,87539.94255,,,,2015-11-12 08:00,2015-12-02 16:00,,2015-08-11 08:00,2015-08-31 16:00,2015-08-11 08:00,2015-08-31 16:00,2015-08-11 08:00,2015-08-31 16:00,2015-11-12 08:00,2015-12-02 16:00,,PT_Normal,,,,,f1f48v2FjEOwKgdItz+mIg,5+U9EKdQhEq8GaBL8k+Cmw,,,N,0,0,,,2014-04-05 12:27,2014-04-05 13:21,admin,admin,
872,140615,1749,36531,642,0,N,N,N,CP_Drtn,TT_Task,DT_FixedDUR2,TK_NotStart,BL1-MEP-AC-7F-2020,Pressurization Units Installation,4457,744,0,168,0,504,504,168,14039.948981,0,14039.948981,,,,2015-11-12 08:00,2015-12-02 16:00,,2015-08-11 08:00,2015-08-31 16:00,2015-08-11 08:00,2015-08-31 16:00,2015-08-11 08:00,2015-08-31 16:00,2015-11-12 08:00,2015-12-02 16:00,,PT_Normal,,,,,eK5y8lcJ3EiFxwqql5PvkQ,ZHDRkrNeRU2P29x4xwvsoQ,,,N,0,0,,,2014-04-05 12:27,2014-04-05 13:21,admin,admin,
873,140616,1749,36531,642,0,N,N,N,CP_Drtn,TT_Task,DT_FixedDUR2,TK_NotStart,BL1-MEP-AC-7F-2030,Chemical Treatment Unit Installation,4457,1240,512,112,0,336,336,112,25793.17122,0,25793.17122,,,,2016-01-13 08:00,2016-01-26 16:00,,2015-08-11 08:00,2015-08-24 16:00,2015-08-11 08:00,2015-08-24 16:00,2015-08-11 08:00,2015-08-24 16:00,2016-01-13 08:00,2016-01-26 16:00,,PT_Normal,,,,,E9ck3HorW0WboZ4xUVbtxQ,Ql3P2hVYRUGZuM7UrXp0qQ,,,N,0,0,,,2014-04-05 12:27,2014-04-05 13:21,admin,admin,
874,140617,1749,36531,642,0,N,N,N,CP_Drtn,TT_Task,DT_FixedDUR2,TK_NotStart,BL1-MEP-AC-7F-2060,BTU Meter Installation,4457,1136,408,48,0,96,96,48,17902.026766,0,17902.026766,,,,2016-01-21 08:00,2016-01-26 16:00,,2015-09-01 08:00,2015-09-06 16:00,2015-09-01 08:00,2015-09-06 16:00,2015-09-01 08:00,2015-09-06 16:00,2016-01-21 08:00,2016-01-26 16:00,,PT_Normal,,,,,67uaGLfn6Uqax1emt4yzOw,ONTHrtY2LE2dBFiaOA/QtA,,,N,0,0,,,2014-04-05 12:27,2014-04-05 13:21,admin,admin,
875,140618,1749,36532,642,0,N,N,N,CP_Drtn,TT_Task,DT_FixedDUR2,TK_NotStart,BL1-MEP-AC-7F-1010,Supports and Hungers Fixing,,728,0,144,0,192,192,144,997.381104,0,997.381104,,,,2015-10-23 08:00,2015-11-09 16:00,,2015-07-24 08:00,2015-08-10 16:00,2015-07-24 08:00,2015-08-10 16:00,2015-07-24 08:00,2015-08-10 16:00,2015-10-23 08:00,2015-11-09 16:00,,PT_Normal,,,,,BoFvX/0qAkuvHDpIlTqS/A,6J+Ymk5p7EmCXtIglb5Rlw,,,N,0,0,,,2014-04-05 12:27,2014-04-05 13:21,admin,admin,
876,140619,1749,36532,642,0,N,N,N,CP_Drtn,TT_FinMile,DT_FixedDrtn,TK_NotStart,BL1-MEP-AC-7F-1000,Foundation for MEP Equipments ready,,728,0,0,0,0,0,0,0,0,0,,,,2015-10-22 16:00,2015-10-22 16:00,,2015-07-23 16:00,2015-07-23 16:00,2015-07-23 16:00,2015-07-23 16:00,2015-07-23 16:00,2015-07-23 16:00,2015-10-22 16:00,2015-10-22 16:00,,PT_Normal,,,,,zuR2U2Ks2EWj7+H7IJCf2w,R9RoXuzWIUCRyXKhzr+kcg,,,N,0,0,,,2014-04-05 12:27,2014-04-05 12:27,admin,admin,
877,140620,1749,36534,642,0,N,N,N,CP_Drtn,TT_Task,DT_FixedDUR2,TK_NotStart,BL1-MEP-FF-7F-3000,Fire Extinguisher Installation,,1240,560,16,0,8,8,16,1076.993507,0,1076.993507,,,,2016-02-15 08:00,2016-02-16 16:00,,2015-09-13 08:00,2015-09-14 16:00,2015-09-13 08:00,2015-09-14 16:00,2015-09-13 08:00,2015-09-14 16:00,2016-02-15 08:00,2016-02-16 16:00,,PT_Normal,,,,,dv+xdbbB20GcccYr/1OBhA,TJqItt/7wUybfzDTxTCL3w,,,N,0,0,,,2014-04-05 12:27,2014-04-05 13:21,admin,admin,
878,140621,1749,36536,642,0,N,N,N,CP_Drtn,TT_Task,DT_FixedDUR2,TK_NotStart,BL1-MEP-PL-7F-3000,Vent Pipes Installation,,1424,0,112,0,383.862,383.862,112,985.628747,0,985.628747,,,,2015-12-14 08:00,2015-12-27 16:00,,2015-06-19 08:00,2015-07-02 16:00,2015-06-19 08:00,2015-07-02 16:00,2015-06-19 08:00,2015-07-02 16:00,2015-12-14 08:00,2015-12-27 16:00,,PT_Normal,,,,,DVhoPS7JU0Kl4CrbpW7OFA,r9DhzEGbGUu9UWP85BfGeQ,,,N,0,0,,,2014-04-05 12:27,2014-04-05 13:21,admin,admin,
879,140622,1749,36536,642,0,N,N,N,CP_Drtn,TT_Task,DT_FixedDUR2,TK_NotStart,BL1-MEP-PL-7F-3010,Rain Outlet Installation,,1424,120,48,0,36.45,36.45,48,450.468469,0,450.468469,,,,2015-12-28 08:00,2016-01-02 16:00,,2015-07-03 08:00,2015-07-08 16:00,2015-07-03 08:00,2015-07-08 16:00,2015-07-03 08:00,2015-07-08 16:00,2015-12-28 08:00,2016-01-02 16:00,,PT_Normal,,,,,5DFwOPFWGECbiwYXd2a4Rg,qZotH5Jx0UuaU6+XH6uWOQ,,,N,0,0,,,2014-04-05 12:27,2014-04-05 13:21,admin,admin,
880,140623,1749,36536,642,0,N,N,N,CP_Drtn,TT_Task,DT_FixedDUR2,TK_NotStart,BL1-MEP-PL-7F-3020,Pip Tap Fixing,4456,1304,456,40,0,8,8,40,129.037712,0,129.037712,,,,2016-01-03 08:00,2016-01-07 16:00,,2015-07-24 08:00,2015-07-28 16:00,2015-07-24 08:00,2015-07-28 16:00,2015-07-24 08:00,2015-07-28 16:00,2016-01-03 08:00,2016-01-07 16:00,,PT_Normal,,,,,6PODAge0dUyh3JffREDdoQ,4IiU/e2kIEu62ORWfay2Bw,,,N,0,0,,,2014-04-05 12:27,2014-04-05 13:21,admin,admin,
881,140624,1749,36120,642,0,N,N,N,CP_Drtn,TT_Task,DT_FixedDUR2,TK_NotStart,BL1-MEP-EL-7F-1000,PVC Back Boxes and Conduits  Fixing in Wall,,728,0,96,0,384,384,96,3319.67233,0,3319.67233,,,,2015-08-21 08:00,2015-09-01 16:00,,2015-05-20 08:00,2015-06-02 16:00,2015-05-20 08:00,2015-06-02 16:00,2015-05-20 08:00,2015-06-02 16:00,2015-08-21 08:00,2015-09-01 16:00,,PT_Normal,,,,,jRg8XxTjnEy/Xwl6yIC12w,IN+EFATUlEyFnAWqeg6m2Q,,,N,0,0,,,2014-04-05 12:27,2014-04-05 13:21,admin,admin,
882,140625,1749,36121,642,0,N,N,N,CP_Drtn,TT_Task,DT_FixedDUR2,TK_NotStart,BL1-MEP-EL-7F-3030,Lights Fitting Fixing,,1240,0,112,0,244,244,112,7336.659378,0,7336.659378,,,,2016-02-06 08:00,2016-02-19 16:00,,2015-09-04 08:00,2015-09-17 16:00,2015-09-04 08:00,2015-09-17 16:00,2015-09-04 08:00,2015-09-17 16:00,2016-02-06 08:00,2016-02-19 16:00,,PT_Normal,,,,,8nz2FRzV00WyNK9EGV2egw,lZNfZwwMUEyJleXzmNCTeA,,,N,0,0,,,2014-04-05 12:27,2014-04-05 13:21,admin,admin,
883,140626,1749,36121,642,0,N,N,N,CP_Drtn,TT_Task,DT_FixedDUR2,TK_NotStart,BL1-MEP-EL-7F-3010,Sockets and Switches Fixing,,1400,160,64,0,128,128,64,1174.957134,0,1174.957134,,,,2016-02-12 08:00,2016-02-19 16:00,,2015-08-21 08:00,2015-08-28 16:00,2015-08-21 08:00,2015-08-28 16:00,2015-08-21 08:00,2015-08-28 16:00,2016-02-12 08:00,2016-02-19 16:00,,PT_Normal,,,,,1a9xHwWow0K0Eugz4pRsuw,e9cnmsT/sE2VlpOBlqWC8g,,,N,0,0,,,2014-04-05 12:27,2014-04-05 13:21,admin,admin,
884,140627,1749,36121,642,0,N,N,N,CP_Drtn,TT_Task,DT_FixedDUR2,TK_NotStart,BL1-MEP-EL-7F-3020,Fire Alarm System Detector Installation,,1320,80,96,0,192,192,96,4046.378277,0,4046.378277,,,,2016-02-08 08:00,2016-02-19 16:00,,2015-08-27 08:00,2015-09-07 16:00,2015-08-27 08:00,2015-09-07 16:00,2015-08-27 08:00,2015-09-07 16:00,2016-02-08 08:00,2016-02-19 16:00,,PT_Normal,,,,,nOPTuWsgzkOUMh/4h31YMA,U1zZY7YvqUKgYobqMp614A,,,N,0,0,,,2014-04-05 12:27,2014-04-05 13:21,admin,admin,
885,140628,1749,36121,642,0,N,N,N,CP_Drtn,TT_Task,DT_FixedDUR2,TK_NotStart,BL1-MEP-EL-7F-3060,SMDB's  Termination and Final Connection,,1328,176,48,0,192,192,48,2791.825001,0,2791.825001,,,,2016-02-03 08:00,2016-02-08 16:00,,2015-08-21 08:00,2015-08-26 16:00,2015-08-21 08:00,2015-08-26 16:00,2015-08-21 08:00,2015-08-26 16:00,2016-02-03 08:00,2016-02-08 16:00,,PT_Normal,,,,,nxtQkis/+0GSMbfa+v8QaA,zdAXiRH4GUqnhdIanGYSHA,,,N,0,0,,,2014-04-05 12:27,2014-04-05 13:21,admin,admin,
886,140629,1749,36122,642,0,N,N,N,CP_Drtn,TT_Task,DT_FixedDUR2,TK_NotStart,BL1-MEP-EL-7F-3050,Power Cable Puling,,1208,0,112,0,168,168,112,6375.759893,0,6375.759893,,,,2016-01-05 08:00,2016-01-18 16:00,,2015-08-07 08:00,2015-08-20 16:00,2015-08-07 08:00,2015-08-20 16:00,2015-08-07 08:00,2015-08-20 16:00,2016-01-05 08:00,2016-01-18 16:00,,PT_Normal,,,,,f1iXXs2cUUun0M2BEpovtw,3jipno8MnUa514Bg1+OwoQ,,,N,0,0,,,2014-04-05 12:27,2014-04-05 13:21,admin,admin,
887,140630,1749,36121,642,0,N,N,N,CP_Drtn,TT_Task,DT_FixedDUR2,TK_NotStart,BL1-MEP-EL-7F-3040,Equipments Panels Installation and Termination,4480,728,392,168,0,1008,1008,168,133402.638622,0,133402.638622,,,,2016-01-27 08:00,2016-02-16 16:00,,2015-10-28 08:00,2015-11-17 16:00,2015-10-28 08:00,2015-11-17 16:00,2015-10-28 08:00,2015-11-17 16:00,2016-01-27 08:00,2016-02-16 16:00,,PT_Normal,,,,,ZGMDia0/+EC2CWYn3ugVIg,nqyKGpi/sEW3kYR1hHKOsQ,,,N,0,0,,,2014-04-05 12:27,2014-04-05 13:21,admin,admin,
888,140631,1749,36121,642,0,N,N,N,CP_Drtn,TT_Task,DT_FixedDUR2,TK_NotStart,BL1-MEP-EL-7F-3000,Air Craft Lights Installation,4455,1424,1088,80,0,160,160,80,92.691808,0,92.691808,,,,2016-02-07 08:00,2016-02-16 16:00,,2015-08-13 08:00,2015-08-22 16:00,2015-08-13 08:00,2015-08-22 16:00,2015-08-13 08:00,2015-08-22 16:00,2016-02-07 08:00,2016-02-16 16:00,,PT_Normal,,,,,ThpAuFVr8Eu61WZxd3FmFQ,MqX2nlen/UqDzMkrI7SRkw,,,N,0,0,,,2014-04-05 12:27,2014-04-05 13:21,admin,admin,
889,140632,1749,36122,642,0,N,N,N,CP_Drtn,TT_Task,DT_FixedDUR2,TK_NotStart,BL1-MEP-EL-7F-2040,SMDB's  Installation,,1664,336,48,0,45,45,48,4202.598932,0,4202.598932,,,,2016-01-28 08:00,2016-02-02 16:00,,2015-07-04 08:00,2015-07-09 16:00,2015-07-04 08:00,2015-07-09 16:00,2015-07-04 08:00,2015-07-09 16:00,2016-01-28 08:00,2016-02-02 16:00,,PT_Normal,,,,,A7RvKpdjLUyxjNRsUXlKCQ,ApHBkfdk50G+RwYr3PlGpA,,,N,0,0,,,2014-04-05 12:27,2014-04-05 13:21,admin,admin,
890,140633,1749,36122,642,0,N,N,N,CP_Drtn,TT_Task,DT_FixedDUR2,TK_NotStart,BL1-MEP-EL-7F-2010,Lighting  Wiring,,1456,248,96,0,241.713,241.713,96,3578.08423,0,3578.08423,,,,2015-12-24 08:00,2016-01-04 16:00,,2015-06-25 08:00,2015-07-06 16:00,2015-06-25 08:00,2015-07-06 16:00,2015-06-25 08:00,2015-07-06 16:00,2015-12-24 08:00,2016-01-04 16:00,,PT_Normal,,,,,cpbH1/MD1Ua1FHFeaaGOXA,k3d1TBZI/EaIjssTqKeSug,,,N,0,0,,,2014-04-05 12:27,2014-04-05 13:21,admin,admin,
891,140634,1749,36122,642,0,N,N,N,CP_Drtn,TT_Task,DT_FixedDUR2,TK_NotStart,BL1-MEP-EL-7F-2020,Power Points Wiring,,1456,248,96,0,192,192,96,2906.213289,0,2906.213289,,,,2015-12-24 08:00,2016-01-04 16:00,,2015-06-25 08:00,2015-07-06 16:00,2015-06-25 08:00,2015-07-06 16:00,2015-06-25 08:00,2015-07-06 16:00,2015-12-24 08:00,2016-01-04 16:00,,PT_Normal,,,,,4Ie7k9yXGkag6876FP0xcQ,R7t0cPVPeEG237kF4dZWCw,,,N,0,0,,,2014-04-05 12:27,2014-04-05 13:21,admin,admin,
892,140635,1749,36122,642,0,N,N,N,CP_Drtn,TT_Task,DT_FixedDUR2,TK_NotStart,BL1-MEP-EL-7F-2050,Cable Tray and Trunking Installation,,1208,0,112,0,336,336,112,9078.448617,0,9078.448617,,,,2015-12-22 08:00,2016-01-04 16:00,,2015-07-24 08:00,2015-08-06 16:00,2015-07-24 08:00,2015-08-06 16:00,2015-07-24 08:00,2015-08-06 16:00,2015-12-22 08:00,2016-01-04 16:00,,PT_Normal,,,,,+bmTUben5U+ezr5NKMzJ9A,5psUNTGgDEWGSoTceuh14Q,,,N,0,0,,,2014-04-05 12:27,2014-04-05 13:21,admin,admin,
893,140636,1749,36122,642,0,N,N,N,CP_Drtn,TT_Task,DT_FixedDUR2,TK_NotStart,BL1-MEP-EL-7F-2030,Fire Alarm System Wiring,,1728,408,96,0,192,192,96,7123.009694,0,7123.009694,,,,2016-01-27 08:00,2016-02-07 16:00,,2015-06-25 08:00,2015-07-06 16:00,2015-06-25 08:00,2015-07-06 16:00,2015-06-25 08:00,2015-07-06 16:00,2016-01-27 08:00,2016-02-07 16:00,,PT_Normal,,,,,b0vZJwsNN0SXkpQVStH1rg,quK+LWD1HU+6ybgEbmTTrA,,,N,0,0,,,2014-04-05 12:27,2014-04-05 13:21,admin,admin,
894,140637,1749,36122,642,0,N,N,N,CP_Drtn,TT_Task,DT_FixedDUR2,TK_NotStart,BL1-MEP-EL-7F-2000,Lighting Protection,4455,1904,1568,40,0,160,160,40,46.345904,0,46.345904,,,,2016-02-12 08:00,2016-02-16 16:00,,2015-06-19 08:00,2015-06-23 16:00,2015-06-19 08:00,2015-06-23 16:00,2015-06-19 08:00,2015-06-23 16:00,2016-02-12 08:00,2016-02-16 16:00,,PT_Normal,,,,,PEGd/GTM2UK5JjUaCCF3yw,/FgzkHCAjk6vSiNR55QY4Q,,,N,0,0,,,2014-04-05 12:27,2014-04-05 13:21,admin,admin,
895,140638,1749,36556,642,0,N,N,N,CP_Drtn,TT_Task,DT_FixedDUR2,TK_NotStart,BL1-MEP-PL-1F-1000,Low Level Water Supply Pipes Installation,,1088,0,96,0,42,42,96,725.216846,0,725.216846,,,,2015-06-13 08:00,2015-06-24 16:00,,2015-01-07 08:00,2015-01-20 16:00,2015-01-07 08:00,2015-01-20 16:00,2015-01-07 08:00,2015-01-20 16:00,2015-06-13 08:00,2015-06-24 16:00,,PT_Normal,,,,,k4wLsNs80EiHQ3KuDPMgvg,xzbNsssLaUi8D7ZOOm8E6A,,,N,0,0,,,2014-04-05 12:27,2014-04-05 13:21,admin,admin,
896,140639,1749,36556,642,0,N,N,N,CP_Drtn,TT_Task,DT_FixedDUR2,TK_NotStart,BL1-MEP-PL-1F-1010,Low Level Drainage Pipes Installation,,1088,0,96,0,12.67,12.67,96,2291.461713,0,2291.461713,,,,2015-06-13 08:00,2015-06-24 16:00,,2015-01-07 08:00,2015-01-20 16:00,2015-01-07 08:00,2015-01-20 16:00,2015-01-07 08:00,2015-01-20 16:00,2015-06-13 08:00,2015-06-24 16:00,,PT_Normal,,,,,ay3+1z3o00WII5Ec+roe8w,z9n0/nrRoUWwBEvO3DZsxQ,,,N,0,0,,,2014-04-05 12:27,2014-04-05 13:21,admin,admin,
897,140640,1749,36556,642,0,N,N,N,CP_Drtn,TT_Task,DT_FixedDUR2,TK_NotStart,BL1-MEP-PL-1F-1020,Supports  installation for High level Pipes,,1280,96,96,0,16.352,16.352,96,831.682549,0,831.682549,,,,2015-07-07 08:00,2015-07-18 16:00,,2015-01-07 08:00,2015-01-20 16:00,2015-01-07 08:00,2015-01-20 16:00,2015-01-07 08:00,2015-01-20 16:00,2015-07-07 08:00,2015-07-18 16:00,,PT_Normal,,,,,BMvQpPWeDEiD7Tn0ptXo9Q,BZ1n9GHdu0OzcBW2T6/GgQ,,,N,0,0,,,2014-04-05 12:27,2014-04-05 13:21,admin,admin,
898,140641,1749,36489,642,0,N,N,N,CP_Drtn,TT_Task,DT_FixedDUR2,TK_NotStart,BL1-MEP-PL-1F-3000,Sanitary Ware Installation Including Connection,,1160,0,112,0,383.862,383.862,112,4453.516455,0,4453.516455,,,,2015-10-25 08:00,2015-11-07 16:00,,2015-06-02 08:00,2015-06-15 16:00,2015-06-02 08:00,2015-06-15 16:00,2015-06-02 08:00,2015-06-15 16:00,2015-10-25 08:00,2015-11-07 16:00,,PT_Normal,,,,,6vHIGPyOEEGbiqUPIOfZeA,w/5KqN9Su0akxg2xrXAKqQ,,,N,0,0,,,2014-04-05 12:27,2014-04-05 13:21,admin,admin,
899,140642,1749,36489,642,0,N,N,N,CP_Drtn,TT_Task,DT_FixedDUR2,TK_NotStart,BL1-MEP-PL-1F-3010,Sanitary Ware Accessories Installation,,1480,32,48,0,36.45,36.45,48,166.215378,0,166.215378,,,,2015-12-18 08:00,2015-12-23 16:00,,2015-06-16 08:00,2015-06-21 16:00,2015-06-16 08:00,2015-06-21 16:00,2015-06-16 08:00,2015-06-21 16:00,2015-12-18 08:00,2015-12-23 16:00,,PT_Normal,,,,,Ly3NQEfGFE+snfJrSvzshQ,PFypHPTlCkesdwLaoGwxTQ,,,N,0,0,,,2014-04-05 12:27,2014-04-05 13:21,admin,admin,
900,140643,1749,36449,642,0,N,N,N,CP_Drtn,TT_Task,DT_FixedDUR2,TK_NotStart,BL1-MEP-PL-1F-2010,Floor Drain Installation,,1160,0,48,0,6,6,48,554.143324,0,554.143324,,,,2015-09-02 08:00,2015-09-07 16:00,,2015-04-01 08:00,2015-04-07 16:00,2015-04-01 08:00,2015-04-07 16:00,2015-04-01 08:00,2015-04-07 16:00,2015-09-02 08:00,2015-09-07 16:00,,PT_Normal,,,,,31IjlzNsQkWu99kgj5L/fQ,7My/utqWgkqsb5VcKEZtQg,,,N,0,0,,,2014-04-05 12:27,2014-04-05 13:21,admin,admin,
901,140644,1749,36449,642,0,N,N,N,CP_Drtn,TT_Task,DT_FixedDUR2,TK_NotStart,BL1-MEP-PL-1F-2030,High Level Water Supply Pipes and Fittings Installation,,1160,0,168,0,150.02,150.02,168,1329.597866,0,1329.597866,,,,2015-07-19 08:00,2015-08-08 16:00,,2015-02-08 08:00,2015-03-03 16:00,2015-02-08 08:00,2015-03-03 16:00,2015-02-08 08:00,2015-03-03 16:00,2015-07-19 08:00,2015-08-08 16:00,,PT_Normal,,,,,SRZcHN40ZkCKP7A6G7UqMA,CI+RXcah1UO2Yj0A/UVoKA,,,N,0,0,,,2014-04-05 12:27,2014-04-05 13:21,admin,admin,
902,140645,1749,36449,642,0,N,N,N,CP_Drtn,TT_Task,DT_FixedDUR2,TK_NotStart,BL1-MEP-PL-1F-2000,High Level Drainage Pipes Installation,,1160,48,168,0,244.38,244.38,168,6583.525267,0,6583.525267,,,,2015-07-19 08:00,2015-08-08 16:00,,2015-02-08 08:00,2015-03-03 16:00,2015-02-08 08:00,2015-03-03 16:00,2015-02-08 08:00,2015-03-03 16:00,2015-07-19 08:00,2015-08-08 16:00,,PT_Normal,,,,,Bxhfdw9Q8k68g+P5FfmlHQ,+CqNZUpza0OQjkTxzZkCAA,,,N,0,0,,,2014-04-05 12:27,2014-04-05 13:21,admin,admin,
903,140646,1749,36449,642,0,N,N,N,CP_Drtn,TT_Task,DT_FixedDUR2,TK_NotStart,BL1-MEP-PL-1F-2040,Water Supply Pipes Pressure Test,4456,1400,168,48,0,48,48,48,151.744312,0,151.744312,,,,2015-09-08 08:00,2015-09-13 16:00,,2015-03-04 08:00,2015-03-10 16:00,2015-03-04 08:00,2015-03-10 16:00,2015-03-04 08:00,2015-03-10 16:00,2015-09-08 08:00,2015-09-13 16:00,,PT_Normal,,,,,kygNQYJsYEige4IY2ckiCA,cMUv+ctuuUSV7T6pvtjQcw,,,N,0,0,,,2014-04-05 12:27,2014-04-05 13:21,admin,admin,
904,140647,1749,36449,642,0,N,N,N,CP_Drtn,TT_Task,DT_FixedDUR2,TK_NotStart,BL1-MEP-PL-1F-2020,Drainage Pipes Gravity Test,,1160,0,48,0,48,48,48,826.240719,0,826.240719,,,,2015-09-08 08:00,2015-09-13 16:00,,2015-04-08 08:00,2015-04-14 16:00,2015-04-08 08:00,2015-04-14 16:00,2015-04-08 08:00,2015-04-14 16:00,2015-09-08 08:00,2015-09-13 16:00,,PT_Normal,,,,,QNTpqwTVl0illqGUPNxP+Q,GZOAzYLPqUKf6nGB7yz08Q,,,N,0,0,,,2014-04-05 12:27,2014-04-05 13:21,admin,admin,
905,140648,1749,36451,642,0,N,N,N,CP_Drtn,TT_Task,DT_FixedDUR2,TK_NotStart,BL1-MEP-AC-1F-3000,Grills and Diffusers Fixing,,1472,0,96,0,384,384,96,11550.608192,0,11550.608192,,,,2015-12-07 08:00,2015-12-18 16:00,,2015-06-06 08:00,2015-06-17 16:00,2015-06-06 08:00,2015-06-17 16:00,2015-06-06 08:00,2015-06-17 16:00,2015-12-07 08:00,2015-12-18 16:00,,PT_Normal,,,,,KXNavY9uckCcy8/qfdHriw,u4QuR3xUZE2PfeBSRAKsQA,,,N,0,0,,,2014-04-05 12:27,2014-04-05 13:21,admin,admin,
906,140649,1749,36384,642,0,N,N,N,CP_Drtn,TT_Task,DT_FixedDUR2,TK_NotStart,BL1-MEP-AC-1F-1000,Supports and Hungers Fixing,,1208,96,96,0,192,192,96,338.467259,0,338.467259,,,,2015-06-28 08:00,2015-07-09 16:00,,2015-01-07 08:00,2015-01-20 16:00,2015-01-07 08:00,2015-01-20 16:00,2015-01-07 08:00,2015-01-20 16:00,2015-06-28 08:00,2015-07-09 16:00,,PT_Normal,,,,,iSY7fTQ+ukyh1S5ZwdhyFA,2aHrntEoIUyueYSf0J+99A,,,N,0,0,,,2014-04-05 12:27,2014-04-05 13:21,admin,admin,
907,140650,1749,36453,642,0,N,N,N,CP_Drtn,TT_Task,DT_FixedDUR2,TK_NotStart,BL1-MEP-AC-1F-2010,Duct Installation and Insulation,4454,1008,0,168,0,263,263,168,4350.939473,0,4350.939473,,,,2015-07-11 08:00,2015-07-31 16:00,,2015-02-21 08:00,2015-03-16 16:00,2015-02-21 08:00,2015-03-16 16:00,2015-02-21 08:00,2015-03-16 16:00,2015-07-11 08:00,2015-07-31 16:00,,PT_Normal,,,,,3h7bLx2M30SwjZmyzGxIdw,MfVtOp5UREW26hPwrVi/Tw,,,N,0,0,,,2014-04-05 12:27,2014-04-05 13:21,admin,admin,
908,140651,1749,36453,642,0,N,N,N,CP_Drtn,TT_Task,DT_FixedDUR2,TK_NotStart,BL1-MEP-AC-1F-2040,Duct Accessories Installation,4457,1248,56,112,0,448,448,112,666.965527,0,666.965527,,,,2015-08-31 08:00,2015-09-13 16:00,,2015-03-17 08:00,2015-04-01 16:00,2015-03-17 08:00,2015-04-01 16:00,2015-03-17 08:00,2015-04-01 16:00,2015-08-31 08:00,2015-09-13 16:00,,PT_Normal,,,,,eCRtZTwzrUSbwIofjEPU2A,0zoHlJhYskelfT2ZPXq9NQ,,,N,0,0,,,2014-04-05 12:27,2014-04-05 13:21,admin,admin,
909,140652,1749,36453,642,0,N,N,N,CP_Drtn,TT_Task,DT_FixedDUR2,TK_NotStart,BL1-MEP-AC-1F-2050,FCU's Installation,4457,1352,24,64,0,192,192,64,6000.055155,0,6000.055155,,,,2015-08-28 08:00,2015-09-04 16:00,,2015-02-26 08:00,2015-03-07 16:00,2015-02-26 08:00,2015-03-07 16:00,2015-02-26 08:00,2015-03-07 16:00,2015-08-28 08:00,2015-09-04 16:00,,PT_Normal,,,,,Hnv6b4uwcUeuselIBMpyvw,cUNMRXVG9kKiZ8QMrVH2Hg,,,N,0,0,,,2014-04-05 12:27,2014-04-05 13:21,admin,admin,
910,140653,1749,36453,642,0,N,N,N,CP_Drtn,TT_Task,DT_FixedDUR2,TK_NotStart,BL1-MEP-AC-1F-2000,Chilled Water Pipes and Fittings Installation,4457,1088,0,168,0,840,840,168,5251.194852,0,5251.194852,,,,2015-07-10 08:00,2015-07-30 16:00,,2015-02-08 08:00,2015-03-03 16:00,2015-02-08 08:00,2015-03-03 16:00,2015-02-08 08:00,2015-03-03 16:00,2015-07-10 08:00,2015-07-30 16:00,,PT_Normal,,,,,ACaS4lNNdkG9iDDA5Vh6DA,nOgnLmyRY06tOkKlBQt0qw,,,N,0,0,,,2014-04-05 12:27,2014-04-05 13:21,admin,admin,
911,140654,1749,36453,642,0,N,N,N,CP_Drtn,TT_Task,DT_FixedDUR2,TK_NotStart,BL1-MEP-AC-1F-2020,Chilled Water Pipes Pressure Test,4457,1328,0,48,0,96,96,48,587.116683,0,587.116683,,,,2015-08-30 08:00,2015-09-04 16:00,,2015-03-04 08:00,2015-03-10 16:00,2015-03-04 08:00,2015-03-10 16:00,2015-03-04 08:00,2015-03-10 16:00,2015-08-30 08:00,2015-09-04 16:00,,PT_Normal,,,,,5Jjce7pGqEaoFldziEu/kw,L2wPIfHZgkef3nQ1XfjI+g,,,N,0,0,,,2014-04-05 12:27,2014-04-05 13:21,admin,admin,
912,140655,1749,36453,642,0,N,N,N,CP_Drtn,TT_Task,DT_FixedDUR2,TK_NotStart,BL1-MEP-AC-1F-2030,Chilled Water Pipes Insulation,4457,1928,120,96,0,384,384,96,1670.208495,0,1670.208495,,,,2015-11-19 08:00,2015-11-30 16:00,,2015-03-11 08:00,2015-03-24 16:00,2015-03-11 08:00,2015-03-24 16:00,2015-03-11 08:00,2015-03-24 16:00,2015-11-19 08:00,2015-11-30 16:00,,PT_Normal,,,,,TCmIC6tNHESrh7GfMz2jaw,AmdS5InSdU6QEyzrq+3K2w,,,N,0,0,,,2014-04-05 12:27,2014-04-05 13:21,admin,admin,
913,140656,1749,36453,642,0,N,N,N,CP_Drtn,TT_Task,DT_FixedDUR2,TK_NotStart,BL1-MEP-AC-1F-2060,Valve Package Installation,4457,1328,0,48,0,96,96,48,2386.490429,0,2386.490429,,,,2015-09-05 08:00,2015-09-10 16:00,,2015-03-11 08:00,2015-03-17 16:00,2015-03-11 08:00,2015-03-17 16:00,2015-03-11 08:00,2015-03-17 16:00,2015-09-05 08:00,2015-09-10 16:00,,PT_Normal,,,,,68FpgIof8EytxWXc2mui+A,N/jtsM+vkEuGdkxIOx57JA,,,N,0,0,,,2014-04-05 12:27,2014-04-05 13:21,admin,admin,
914,140657,1749,36453,642,0,N,N,N,CP_Drtn,TT_Task,DT_FixedDUR2,TK_NotStart,BL1-MEP-AC-1F-2070,FCU's Drain Pipes Installation,4457,1328,168,24,0,48,48,24,519.927167,0,519.927167,,,,2015-09-11 08:00,2015-09-13 16:00,,2015-03-18 08:00,2015-03-21 16:00,2015-03-18 08:00,2015-03-21 16:00,2015-03-18 08:00,2015-03-21 16:00,2015-09-11 08:00,2015-09-13 16:00,,PT_Normal,,,,,RCjl0BIZj0CG4bOm7Yy6Zw,Y7yCU6aUSk2nMrdYLYUFAw,,,N,0,0,,,2014-04-05 12:27,2014-04-05 13:21,admin,admin,
915,140658,1749,36555,642,0,N,N,N,CP_Drtn,TT_Task,DT_FixedDUR2,TK_NotStart,BL1-MEP-FF-1F-3000,Fire Extinguisher Installation,,1712,64,16,0,8,8,16,1076.993507,0,1076.993507,,,,2016-02-05 08:00,2016-02-06 16:00,,2015-07-06 08:00,2015-07-07 16:00,2015-07-06 08:00,2015-07-07 16:00,2015-07-06 08:00,2015-07-07 16:00,2016-02-05 08:00,2016-02-06 16:00,,PT_Normal,,,,,1snzpR25CEud6Fri/kH3Qw,YH7bEFws+0Go3j9uhKeCOg,,,N,0,0,,,2014-04-05 12:27,2014-04-05 13:21,admin,admin,
916,140659,1749,36555,642,0,N,N,N,CP_Drtn,TT_Task,DT_FixedDUR2,TK_NotStart,BL1-MEP-FF-1F-3010,Hose reel Cabinet Installation and Connection,,1496,0,48,0,192,192,48,1336.852298,0,1336.852298,,,,2016-01-12 08:00,2016-01-17 16:00,,2015-07-09 08:00,2015-07-14 16:00,2015-07-09 08:00,2015-07-14 16:00,2015-07-09 08:00,2015-07-14 16:00,2016-01-12 08:00,2016-01-17 16:00,,PT_Normal,,,,,ob29xBe27Uin2V5dVzmYig,tF7LXbdN10GcOu/7QJyduw,,,N,0,0,,,2014-04-05 12:27,2014-04-05 13:21,admin,admin,
917,140660,1749,36230,642,0,N,N,N,CP_Drtn,TT_Task,DT_FixedDUR2,TK_NotStart,BL1-MEP-EL-1F-1000,PVC Back Boxes and Conduits  Fixing in Wall,,1136,72,96,0,384,384,96,3319.67233,0,3319.67233,,,,2015-06-10 08:00,2015-06-21 16:00,,2014-12-25 08:00,2015-01-10 16:00,2014-12-25 08:00,2015-01-10 16:00,2014-12-25 08:00,2015-01-10 16:00,2015-06-10 08:00,2015-06-21 16:00,,PT_Normal,,,,,swvT8q6u/ESD0zgmsq3sgw,MOIYFzsUmkyDX271FhydwA,,,N,0,0,,,2014-04-05 12:27,2014-04-05 13:21,admin,admin,
918,140661,1749,36230,642,0,N,N,N,CP_Drtn,TT_Task,DT_FixedDUR2,TK_NotStart,BL1-MEP-EL-1F-1010,DB's Inclosure Fixing,4455,1136,48,48,0,96,96,48,2136.399392,0,2136.399392,,,,2015-06-19 08:00,2015-06-24 16:00,,2015-01-07 08:00,2015-01-13 16:00,2015-01-07 08:00,2015-01-13 16:00,2015-01-07 08:00,2015-01-13 16:00,2015-06-19 08:00,2015-06-24 16:00,,PT_Normal,,,,,xnGEI07bHkmgjpyzgJguzg,y4SZ+hF+MkaDMLmCXa+LRg,,,N,0,0,,,2014-04-05 12:27,2014-04-05 13:21,admin,admin,
919,140662,1749,36190,642,0,N,N,N,CP_Drtn,TT_Task,DT_FixedDUR2,TK_NotStart,BL1-MEP-EL-1F-3000,Lights Fitting Fixing,,1240,0,112,0,244,244,112,7336.659378,0,7336.659378,,,,2015-11-14 08:00,2015-11-27 16:00,,2015-06-12 08:00,2015-06-25 16:00,2015-06-12 08:00,2015-06-25 16:00,2015-06-12 08:00,2015-06-25 16:00,2015-11-14 08:00,2015-11-27 16:00,,PT_Normal,,,,,sla1TA9sB0W/CFdSBINTCA,SZZyUqd+l0mka7eyzxB2VA,,,N,0,0,,,2014-04-05 12:27,2014-04-05 13:21,admin,admin,
920,140663,1749,36190,642,0,N,N,N,CP_Drtn,TT_Task,DT_FixedDUR2,TK_NotStart,BL1-MEP-EL-1F-3050,Sockets and Switches Fixing,,1928,144,64,0,128,128,64,1174.957134,0,1174.957134,,,,2015-12-26 08:00,2016-01-02 16:00,,2015-04-23 08:00,2015-05-02 16:00,2015-04-23 08:00,2015-05-02 16:00,2015-04-23 08:00,2015-05-02 16:00,2015-12-26 08:00,2016-01-02 16:00,,PT_Normal,,,,,UwPsOLvemkyxo9BHhjKJwg,YhrVbfSS/0iDD2RrMjPlxQ,,,N,0,0,,,2014-04-05 12:27,2014-04-05 13:21,admin,admin,
921,140664,1749,36190,642,0,N,N,N,CP_Drtn,TT_Task,DT_FixedDUR2,TK_NotStart,BL1-MEP-EL-1F-3010,Emergency Light Fixing,,2000,152,64,0,128,128,64,5722.024623,0,5722.024623,,,,2016-01-03 08:00,2016-01-10 16:00,,2015-04-22 08:00,2015-04-30 16:00,2015-04-22 08:00,2015-04-30 16:00,2015-04-22 08:00,2015-04-30 16:00,2016-01-03 08:00,2016-01-10 16:00,,PT_Normal,,,,,1nn7d8Zx5Uaayigz9ZeLvQ,qw7pdXZfhkaPXKiXdzNJXg,,,N,0,0,,,2014-04-05 12:27,2014-04-05 13:21,admin,admin,
922,140665,1749,36190,642,0,N,N,N,CP_Drtn,TT_Task,DT_FixedDUR2,TK_NotStart,BL1-MEP-EL-1F-3020,Fire Alarm System Detector Installation,,1712,120,96,0,192,192,96,4046.378277,0,4046.378277,,,,2015-11-28 08:00,2015-12-09 16:00,,2015-04-22 08:00,2015-05-05 16:00,2015-04-22 08:00,2015-05-05 16:00,2015-04-22 08:00,2015-05-05 16:00,2015-11-28 08:00,2015-12-09 16:00,,PT_Normal,,,,,e1qkMCnj7EeJvgah34ZUQA,2vuEd8QvjU2oEA+7h0umXA,,,N,0,0,,,2014-04-05 12:27,2014-04-05 13:21,admin,admin,
923,140666,1749,36190,642,0,N,N,N,CP_Drtn,TT_Task,DT_FixedDUR2,TK_NotStart,BL1-MEP-EL-1F-3070,SMDB's  Termination and Final Connection,,1960,168,48,0,192,192,48,2791.825001,0,2791.825001,,,,2015-12-29 08:00,2016-01-03 16:00,,2015-04-22 08:00,2015-04-28 16:00,2015-04-22 08:00,2015-04-28 16:00,2015-04-22 08:00,2015-04-28 16:00,2015-12-29 08:00,2016-01-03 16:00,,PT_Normal,,,,,7CFmj4sBvECyOY+dNWMjHg,W8YwxJE1w0CIYTa7VZlC5w,,,N,0,0,,,2014-04-05 12:27,2014-04-05 13:21,admin,admin,
924,140667,1749,36182,642,0,N,N,N,CP_Drtn,TT_Task,DT_FixedDUR2,TK_NotStart,BL1-MEP-EL-1F-3060,Power Cable Puling,,1632,104,112,0,168,168,112,6375.759893,0,6375.759893,,,,2015-10-13 08:00,2015-10-26 16:00,,2015-03-11 08:00,2015-03-26 16:00,2015-03-11 08:00,2015-03-26 16:00,2015-03-11 08:00,2015-03-26 16:00,2015-10-13 08:00,2015-10-26 16:00,,PT_Normal,,,,,7D9A7K3jsUuXo6cQXp5Wvw,dVUnvpZDeES+RW/Yu3ebyg,,,N,0,0,,,2014-04-05 12:27,2014-04-05 13:21,admin,admin,
925,140668,1749,36190,642,0,N,N,N,CP_Drtn,TT_Task,DT_FixedDUR2,TK_NotStart,BL1-MEP-EL-1F-3030,Despature for Low Current  System Installation,4455,1632,0,112,0,336,336,112,72752.164276,0,72752.164276,,,,2015-11-18 08:00,2015-12-01 16:00,,2015-04-22 08:00,2015-05-07 16:00,2015-04-22 08:00,2015-05-07 16:00,2015-04-22 08:00,2015-05-07 16:00,2015-11-18 08:00,2015-12-01 16:00,,PT_Normal,,,,,G53a3dbkVkqXT6TuJ8wqcA,vpbxg71aikKALXpajZ/ajQ,,,N,0,0,,,2014-04-05 12:27,2014-04-05 13:21,admin,admin,
926,140669,1749,36190,642,0,N,N,N,CP_Drtn,TT_Task,DT_FixedDUR2,TK_NotStart,BL1-MEP-EL-1F-3040,Low Current  System Outlet installation and Connection,4455,2112,280,80,0,80,80,80,3870.787498,0,3870.787498,,,,2016-01-31 08:00,2016-02-09 16:00,,2015-05-09 08:00,2015-05-19 16:00,2015-05-09 08:00,2015-05-19 16:00,2015-05-09 08:00,2015-05-19 16:00,2016-01-31 08:00,2016-02-09 16:00,,PT_Normal,,,,,h7vzQ02kakK23NOIW2wy6Q,deY2HjF0uUueC6S/LWgXAg,,,N,0,0,,,2014-04-05 12:27,2014-04-05 13:21,admin,admin,
927,140670,1749,36182,642,0,N,N,N,CP_Drtn,TT_Task,DT_FixedDUR2,TK_NotStart,BL1-MEP-EL-1F-2030,SMDB's  Installation,,2112,0,48,0,45,45,48,4202.598932,0,4202.598932,,,,2015-12-23 08:00,2015-12-28 16:00,,2015-03-24 08:00,2015-03-30 16:00,2015-03-24 08:00,2015-03-30 16:00,2015-03-24 08:00,2015-03-30 16:00,2015-12-23 08:00,2015-12-28 16:00,,PT_Normal,,,,,Lzbzaf1D3U2b3hwR0BK+Dw,315V0dBzhkOf5wn9g1t/xw,,,N,0,0,,,2014-04-05 12:27,2014-04-05 13:21,admin,admin,
928,140671,1749,36182,642,0,N,N,N,CP_Drtn,TT_Task,DT_FixedDUR2,TK_NotStart,BL1-MEP-EL-1F-2040,Lighting  Wiring,,1520,120,96,0,241.713,241.713,96,3578.08423,0,3578.08423,,,,2015-09-02 08:00,2015-09-13 16:00,,2015-02-08 08:00,2015-02-21 16:00,2015-02-08 08:00,2015-02-21 16:00,2015-02-08 08:00,2015-02-21 16:00,2015-09-02 08:00,2015-09-13 16:00,,PT_Normal,,,,,odrOgp1eoEKJduqlL8VH8w,/BQbIvDwSEKVp/QZEhXDHQ,,,N,0,0,,,2014-04-05 12:27,2014-04-05 13:21,admin,admin,
929,140672,1749,36182,642,0,N,N,N,CP_Drtn,TT_Task,DT_FixedDUR2,TK_NotStart,BL1-MEP-EL-1F-2050,Power Points Wiring,,1424,24,96,0,192,192,96,2906.213289,0,2906.213289,,,,2015-08-21 08:00,2015-09-01 16:00,,2015-02-08 08:00,2015-02-21 16:00,2015-02-08 08:00,2015-02-21 16:00,2015-02-08 08:00,2015-02-21 16:00,2015-08-21 08:00,2015-09-01 16:00,,PT_Normal,,,,,TNbOm/cCcEWK+AxotDZ/Lw,N5ZwKI/N3E+V18e3iz5Ddg,,,N,0,0,,,2014-04-05 12:27,2014-04-05 13:21,admin,admin,
930,140673,1749,36182,642,0,N,N,N,CP_Drtn,TT_Task,DT_FixedDUR2,TK_NotStart,BL1-MEP-EL-1F-2020,Cable Tray and Trunking Installation,,1504,104,112,0,336,336,112,9078.448617,0,9078.448617,,,,2015-08-31 08:00,2015-09-13 16:00,,2015-02-08 08:00,2015-02-23 16:00,2015-02-08 08:00,2015-02-23 16:00,2015-02-08 08:00,2015-02-23 16:00,2015-08-31 08:00,2015-09-13 16:00,,PT_Normal,,,,,izQuHvxDDUqD3f3f6Ywqbg,ZuMwsljyjUCNkzB+4gCNxQ,,,N,0,0,,,2014-04-05 12:27,2014-04-05 13:21,admin,admin,
931,140674,1749,36182,642,0,N,N,N,CP_Drtn,TT_Task,DT_FixedDUR2,TK_NotStart,BL1-MEP-EL-1F-2060,Emergency Light Wiring,,1552,152,64,0,128,128,64,1210.028798,0,1210.028798,,,,2015-09-06 08:00,2015-09-13 16:00,,2015-02-08 08:00,2015-02-16 16:00,2015-02-08 08:00,2015-02-16 16:00,2015-02-08 08:00,2015-02-16 16:00,2015-09-06 08:00,2015-09-13 16:00,,PT_Normal,,,,,Ifel8u4H+k+sQugA5ngJGQ,dpnpWBv+AEGd3aKNv6TCnQ,,,N,0,0,,,2014-04-05 12:27,2014-04-05 13:21,admin,admin,
932,140675,1749,36182,642,0,N,N,N,CP_Drtn,TT_Task,DT_FixedDUR2,TK_NotStart,BL1-MEP-EL-1F-2000,Fire Alarm System Wiring,,1520,120,96,0,192,192,96,7123.009694,0,7123.009694,,,,2015-09-02 08:00,2015-09-13 16:00,,2015-02-08 08:00,2015-02-21 16:00,2015-02-08 08:00,2015-02-21 16:00,2015-02-08 08:00,2015-02-21 16:00,2015-09-02 08:00,2015-09-13 16:00,,PT_Normal,,,,,1Pjg7c8IOEGvwFUjGaA0kA,ytY/JQfx+UGGesV/etDOcA,,,N,0,0,,,2014-04-05 12:27,2014-04-05 13:21,admin,admin,
933,140676,1749,36182,642,0,N,N,N,CP_Drtn,TT_Task,DT_FixedDUR2,TK_NotStart,BL1-MEP-EL-1F-2070,DB's Installation and Termination,4455,1400,0,96,0,288,288,96,4982.925025,0,4982.925025,,,,2015-09-02 08:00,2015-09-13 16:00,,2015-02-25 08:00,2015-03-10 16:00,2015-02-25 08:00,2015-03-10 16:00,2015-02-25 08:00,2015-03-10 16:00,2015-09-02 08:00,2015-09-13 16:00,,PT_Normal,,,,,AOLrlFyAn06oFj1y05dZIA,9xOEW794cEK1PBzzKSkAQA,,,N,0,0,,,2014-04-05 12:27,2014-04-05 13:21,admin,admin,
934,140677,1749,36182,642,0,N,N,N,CP_Drtn,TT_Task,DT_FixedDUR2,TK_NotStart,BL1-MEP-EL-1F-2010,Low Current  System Wiring,4455,2024,392,112,0,244,244,112,38231.783306,0,38231.783306,,,,2015-11-04 08:00,2015-11-17 16:00,,2015-02-08 08:00,2015-02-23 16:00,2015-02-08 08:00,2015-02-23 16:00,2015-02-08 08:00,2015-02-23 16:00,2015-11-04 08:00,2015-11-17 16:00,,PT_Normal,,,,,oKs0sEz1h0Su7NVE6kJC0A,gpfCae5I9Eqasp0bUx4BmA,,,N,0,0,,,2014-04-05 12:27,2014-04-05 13:21,admin,admin,
935,140678,1749,36357,642,0,N,N,N,CP_Drtn,TT_Task,DT_FixedDUR2,TK_NotStart,BL1-MEP-PL-3F-1000,Low Level Water Supply Pipes Installation,,992,0,96,0,42,42,96,725.216846,0,725.216846,,,,2015-07-19 08:00,2015-07-30 16:00,,2015-03-04 08:00,2015-03-17 16:00,2015-03-04 08:00,2015-03-17 16:00,2015-03-04 08:00,2015-03-17 16:00,2015-07-19 08:00,2015-07-30 16:00,,PT_Normal,,,,,WLYypQIRtEGWyq925e0CDQ,3lJbPAdMBkOSGgWgZHe3nA,,,N,0,0,,,2014-04-05 12:27,2014-04-05 13:21,admin,admin,
936,140679,1749,36357,642,0,N,N,N,CP_Drtn,TT_Task,DT_FixedDUR2,TK_NotStart,BL1-MEP-PL-3F-1010,Low Level Drainage Pipes Installation,,992,0,96,0,12.67,12.67,96,2291.461713,0,2291.461713,,,,2015-07-19 08:00,2015-07-30 16:00,,2015-03-04 08:00,2015-03-17 16:00,2015-03-04 08:00,2015-03-17 16:00,2015-03-04 08:00,2015-03-17 16:00,2015-07-19 08:00,2015-07-30 16:00,,PT_Normal,,,,,bwYMZ/O3DUegG+P0WtFBCw,2MkTlJdiaUuDsn2TFQvixg,,,N,0,0,,,2014-04-05 12:27,2014-04-05 13:21,admin,admin,
937,140680,1749,36357,642,0,N,N,N,CP_Drtn,TT_Task,DT_FixedDUR2,TK_NotStart,BL1-MEP-PL-3F-1020,Supports  installation for High level Pipes,,1232,88,96,0,16.352,16.352,96,831.682549,0,831.682549,,,,2015-08-18 08:00,2015-08-29 16:00,,2015-03-04 08:00,2015-03-17 16:00,2015-03-04 08:00,2015-03-17 16:00,2015-03-04 08:00,2015-03-17 16:00,2015-08-18 08:00,2015-08-29 16:00,,PT_Normal,,,,,Xksf6m5Zm0uAJ5BY91Ivdw,PrCOl/bu40SZf2h/1bV6Cg,,,N,0,0,,,2014-04-05 12:27,2014-04-05 13:21,admin,admin,
938,140681,1749,36567,642,0,N,N,N,CP_Drtn,TT_Task,DT_FixedDUR2,TK_NotStart,BL1-MEP-PL-3F-3000,Sanitary Ware Installation Including Connection,,1016,0,112,0,383.862,383.862,112,4453.516455,0,4453.516455,,,,2015-11-22 08:00,2015-12-05 16:00,,2015-07-18 08:00,2015-07-31 16:00,2015-07-18 08:00,2015-07-31 16:00,2015-07-18 08:00,2015-07-31 16:00,2015-11-22 08:00,2015-12-05 16:00,,PT_Normal,,,,,k/7HCKlQmU+P1By66a8uww,D+d/itruFkOjY/rYMcY7Ww,,,N,0,0,,,2014-04-05 12:27,2014-04-05 13:21,admin,admin,
939,140682,1749,36567,642,0,N,N,N,CP_Drtn,TT_Task,DT_FixedDUR2,TK_NotStart,BL1-MEP-PL-3F-3010,Sanitary Ware Accessories Installation,,1208,0,48,0,36.45,36.45,48,166.215378,0,166.215378,,,,2015-12-30 08:00,2016-01-04 16:00,,2015-08-01 08:00,2015-08-06 16:00,2015-08-01 08:00,2015-08-06 16:00,2015-08-01 08:00,2015-08-06 16:00,2015-12-30 08:00,2016-01-04 16:00,,PT_Normal,,,,,gpQy/CcNWkC7oTCHpwArEA,ijHVbbOY4kqQ2fneep1Iew,,,N,0,0,,,2014-04-05 12:27,2014-04-05 13:21,admin,admin,
940,140683,1749,36400,642,0,N,N,N,CP_Drtn,TT_Task,DT_FixedDUR2,TK_NotStart,BL1-MEP-PL-3F-2010,Floor Drain Installation,,992,0,48,0,6,6,48,554.143324,0,554.143324,,,,2015-10-02 08:00,2015-10-07 16:00,,2015-05-31 08:00,2015-06-05 16:00,2015-05-31 08:00,2015-06-05 16:00,2015-05-31 08:00,2015-06-05 16:00,2015-10-02 08:00,2015-10-07 16:00,,PT_Normal,,,,,NY8MYnre4Ua+QUlVe0Un5Q,TgyEqX9JukW+/Zz+cGDLvQ,,,N,0,0,,,2014-04-05 12:27,2014-04-05 13:21,admin,admin,
941,140684,1749,36400,642,0,N,N,N,CP_Drtn,TT_Task,DT_FixedDUR2,TK_NotStart,BL1-MEP-PL-3F-2020,High Level Water Supply Pipes and Fittings Installation,,1088,0,168,0,150.02,150.02,168,1329.597866,0,1329.597866,,,,2015-08-30 08:00,2015-09-19 16:00,,2015-04-08 08:00,2015-05-02 16:00,2015-04-08 08:00,2015-05-02 16:00,2015-04-08 08:00,2015-05-02 16:00,2015-08-30 08:00,2015-09-19 16:00,,PT_Normal,,,,,ZNLezqoEtkerxFKqIyqhtg,mXmfQ5AcX0WEzMsqlbcmUA,,,N,0,0,,,2014-04-05 12:27,2014-04-05 13:21,admin,admin,
942,140685,1749,36400,642,0,N,N,N,CP_Drtn,TT_Task,DT_FixedDUR2,TK_NotStart,BL1-MEP-PL-3F-2000,High Level Drainage Pipes Installation,,1088,16,168,0,244.38,244.38,168,6583.525267,0,6583.525267,,,,2015-08-30 08:00,2015-09-19 16:00,,2015-04-08 08:00,2015-05-02 16:00,2015-04-08 08:00,2015-05-02 16:00,2015-04-08 08:00,2015-05-02 16:00,2015-08-30 08:00,2015-09-19 16:00,,PT_Normal,,,,,q9Pw7PsEWk+RGL6iJ9RCbw,gdALRUzke0iVJY4IueHOog,,,N,0,0,,,2014-04-05 12:27,2014-04-05 13:21,admin,admin,
943,140686,1749,36400,642,0,N,N,N,CP_Drtn,TT_Task,DT_FixedDUR2,TK_NotStart,BL1-MEP-PL-3F-2040,Water Supply Pipes Pressure Test,4456,1232,136,48,0,48,48,48,151.744312,0,151.744312,,,,2015-10-08 08:00,2015-10-13 16:00,,2015-05-03 08:00,2015-05-09 16:00,2015-05-03 08:00,2015-05-09 16:00,2015-05-03 08:00,2015-05-09 16:00,2015-10-08 08:00,2015-10-13 16:00,,PT_Normal,,,,,xVOWoW0lQEm/coXuiLL6dA,6AjiyqxW4E6oX6snyP9Ttg,,,N,0,0,,,2014-04-05 12:27,2014-04-05 13:21,admin,admin,
944,140687,1749,36400,642,0,N,N,N,CP_Drtn,TT_Task,DT_FixedDUR2,TK_NotStart,BL1-MEP-PL-3F-2030,Drainage Pipes Gravity Test,,992,0,48,0,48,48,48,826.240719,0,826.240719,,,,2015-10-08 08:00,2015-10-13 16:00,,2015-06-06 08:00,2015-06-11 16:00,2015-06-06 08:00,2015-06-11 16:00,2015-06-06 08:00,2015-06-11 16:00,2015-10-08 08:00,2015-10-13 16:00,,PT_Normal,,,,,V4FRUyG78ESpAG9B6oGoeQ,a6MbkvXSwUmo+W4Qk8oeAA,,,N,0,0,,,2014-04-05 12:27,2014-04-05 13:21,admin,admin,
945,140688,1749,36361,642,0,N,N,N,CP_Drtn,TT_Task,DT_FixedDUR2,TK_NotStart,BL1-MEP-AC-3F-1000,Supports and Hungers Fixing,,1160,88,96,0,192,192,96,338.467259,0,338.467259,,,,2015-08-09 08:00,2015-08-20 16:00,,2015-03-04 08:00,2015-03-17 16:00,2015-03-04 08:00,2015-03-17 16:00,2015-03-04 08:00,2015-03-17 16:00,2015-08-09 08:00,2015-08-20 16:00,,PT_Normal,,,,,7pdp6+cfMk654tZGvARFGg,udJPEryvM0uQxeDiBSlxSQ,,,N,0,0,,,2014-04-05 12:27,2014-04-05 13:21,admin,admin,
946,140689,1749,36571,642,0,N,N,N,CP_Drtn,TT_Task,DT_FixedDUR2,TK_NotStart,BL1-MEP-AC-3F-3000,Grills and Diffusers Fixing,,1472,0,96,0,384,384,96,11550.608192,0,11550.608192,,,,2015-12-31 08:00,2016-01-11 16:00,,2015-06-30 08:00,2015-07-11 16:00,2015-06-30 08:00,2015-07-11 16:00,2015-06-30 08:00,2015-07-11 16:00,2015-12-31 08:00,2016-01-11 16:00,,PT_Normal,,,,,KliAWQkHdki40of75dMHgw,ZnPkcVCm8kGBfd3jzRRiOQ,,,N,0,0,,,2014-04-05 12:27,2014-04-05 13:21,admin,admin,
947,140690,1749,36472,642,0,N,N,N,CP_Drtn,TT_Task,DT_FixedDUR2,TK_NotStart,BL1-MEP-AC-3F-2010,Duct Installation and Insulation,4454,1008,0,168,0,263,263,168,4350.939473,0,4350.939473,,,,2015-08-22 08:00,2015-09-11 16:00,,2015-04-11 08:00,2015-05-04 16:00,2015-04-11 08:00,2015-05-04 16:00,2015-04-11 08:00,2015-05-04 16:00,2015-08-22 08:00,2015-09-11 16:00,,PT_Normal,,,,,Unn+XLqM9U2BbHzq+l65UQ,S7OpgjXznEafoajv/7hb6Q,,,N,0,0,,,2014-04-05 12:27,2014-04-05 13:21,admin,admin,
948,140691,1749,36472,642,0,N,N,N,CP_Drtn,TT_Task,DT_FixedDUR2,TK_NotStart,BL1-MEP-AC-3F-2050,Duct Accessories Installation,4457,1152,56,112,0,448,448,112,666.965527,0,666.965527,,,,2015-09-30 08:00,2015-10-13 16:00,,2015-05-05 08:00,2015-05-20 16:00,2015-05-05 08:00,2015-05-20 16:00,2015-05-05 08:00,2015-05-20 16:00,2015-09-30 08:00,2015-10-13 16:00,,PT_Normal,,,,,w3ePh2aFB0KrF/sk+yysKw,9FvP1LQ6ZkmRzKHxK3gYIw,,,N,0,0,,,2014-04-05 12:27,2014-04-05 13:21,admin,admin,
949,140692,1749,36472,642,0,N,N,N,CP_Drtn,TT_Task,DT_FixedDUR2,TK_NotStart,BL1-MEP-AC-3F-2040,FCU's Installation,4457,1312,120,64,0,192,192,64,6000.055155,0,6000.055155,,,,2015-09-27 08:00,2015-10-04 16:00,,2015-04-08 08:00,2015-04-16 16:00,2015-04-08 08:00,2015-04-16 16:00,2015-04-08 08:00,2015-04-16 16:00,2015-09-27 08:00,2015-10-04 16:00,,PT_Normal,,,,,xmWF7TbCxkGaEQC0ZG0AJg,7S2ICEbosEajYUmC1a9mbQ,,,N,0,0,,,2014-04-05 12:27,2014-04-05 13:21,admin,admin,
950,140693,1749,36472,642,0,N,N,N,CP_Drtn,TT_Task,DT_FixedDUR2,TK_NotStart,BL1-MEP-AC-3F-2000,Chilled Water Pipes and Fittings Installation,4457,1016,0,168,0,840,840,168,5251.194852,0,5251.194852,,,,2015-08-21 08:00,2015-09-10 16:00,,2015-04-08 08:00,2015-05-02 16:00,2015-04-08 08:00,2015-05-02 16:00,2015-04-08 08:00,2015-05-02 16:00,2015-08-21 08:00,2015-09-10 16:00,,PT_Normal,,,,,wyQt5uW3/Ea6zWVUOi+WXA,kYXBTwWa1k+VS2MAhjJy6A,,,N,0,0,,,2014-04-05 12:27,2014-04-05 13:21,admin,admin,
951,140694,1749,36472,642,0,N,N,N,CP_Drtn,TT_Task,DT_FixedDUR2,TK_NotStart,BL1-MEP-AC-3F-2020,Chilled Water Pipes Pressure Test,4457,1160,0,48,0,96,96,48,587.116683,0,587.116683,,,,2015-09-29 08:00,2015-10-04 16:00,,2015-05-03 08:00,2015-05-09 16:00,2015-05-03 08:00,2015-05-09 16:00,2015-05-03 08:00,2015-05-09 16:00,2015-09-29 08:00,2015-10-04 16:00,,PT_Normal,,,,,TxD0fSJBm0O4giAxEVeQiA,Z2YAL3vZ3Eq0L5tswY4V1Q,,,N,0,0,,,2014-04-05 12:27,2014-04-05 13:21,admin,admin,
952,140695,1749,36472,642,0,N,N,N,CP_Drtn,TT_Task,DT_FixedDUR2,TK_NotStart,BL1-MEP-AC-3F-2030,Chilled Water Pipes Insulation,4457,1712,88,96,0,384,384,96,1670.208495,0,1670.208495,,,,2015-12-13 08:00,2015-12-24 16:00,,2015-05-10 08:00,2015-05-23 16:00,2015-05-10 08:00,2015-05-23 16:00,2015-05-10 08:00,2015-05-23 16:00,2015-12-13 08:00,2015-12-24 16:00,,PT_Normal,,,,,Jpzmfv6FFEq9tC55gzyI8Q,YpJn2X54/UWbIxIIOB5icw,,,N,0,0,,,2014-04-05 12:27,2014-04-05 13:21,admin,admin,
953,140696,1749,36472,642,0,N,N,N,CP_Drtn,TT_Task,DT_FixedDUR2,TK_NotStart,BL1-MEP-AC-3F-2060,Valve Package Installation,4457,1160,0,48,0,96,96,48,2386.490429,0,2386.490429,,,,2015-10-05 08:00,2015-10-10 16:00,,2015-05-10 08:00,2015-05-16 16:00,2015-05-10 08:00,2015-05-16 16:00,2015-05-10 08:00,2015-05-16 16:00,2015-10-05 08:00,2015-10-10 16:00,,PT_Normal,,,,,djs8VTjCT0+DuQpEqw9UuQ,xlw5ruy0Zk2xIv3nkGp4pw,,,N,0,0,,,2014-04-05 12:27,2014-04-05 13:21,admin,admin,
954,140697,1749,36472,642,0,N,N,N,CP_Drtn,TT_Task,DT_FixedDUR2,TK_NotStart,BL1-MEP-AC-3F-2070,FCU's Drain Pipes Installation,4457,1160,160,24,0,48,48,24,519.927167,0,519.927167,,,,2015-10-11 08:00,2015-10-13 16:00,,2015-05-17 08:00,2015-05-19 16:00,2015-05-17 08:00,2015-05-19 16:00,2015-05-17 08:00,2015-05-19 16:00,2015-10-11 08:00,2015-10-13 16:00,,PT_Normal,,,,,2J/q1Xw2R0ecgi66AJj97A,orlrw0tdYUeCHg2kzGXHMA,,,N,0,0,,,2014-04-05 12:27,2014-04-05 13:21,admin,admin,
955,140698,1749,36406,642,0,N,N,N,CP_Drtn,TT_Task,DT_FixedDUR2,TK_NotStart,BL1-MEP-FF-3F-3000,Fire Extinguisher Installation,,1528,168,16,0,8,8,16,1076.993507,0,1076.993507,,,,2016-02-09 08:00,2016-02-10 16:00,,2015-08-02 08:00,2015-08-03 16:00,2015-08-02 08:00,2015-08-03 16:00,2015-08-02 08:00,2015-08-03 16:00,2016-02-09 08:00,2016-02-10 16:00,,PT_Normal,,,,,ovV4TO/I7kyT5gqVMjcXLQ,XfevSuwdp0OCxetziHHiUw,,,N,0,0,,,2014-04-05 12:27,2014-04-05 13:21,admin,admin,
956,140699,1749,36406,642,0,N,N,N,CP_Drtn,TT_Task,DT_FixedDUR2,TK_NotStart,BL1-MEP-FF-3F-3010,Hose reel Cabinet Installation and Connection,,1496,0,48,0,192,192,48,1336.852298,0,1336.852298,,,,2016-01-24 08:00,2016-01-29 16:00,,2015-07-21 08:00,2015-07-26 16:00,2015-07-21 08:00,2015-07-26 16:00,2015-07-21 08:00,2015-07-26 16:00,2016-01-24 08:00,2016-01-29 16:00,,PT_Normal,,,,,VF+Vq0/O6kKhA+RJhxVpaw,LHoXQepfWEuueLUZtrYVlg,,,N,0,0,,,2014-04-05 12:27,2014-04-05 13:21,admin,admin,
957,140700,1749,36158,642,0,N,N,N,CP_Drtn,TT_Task,DT_FixedDUR2,TK_NotStart,BL1-MEP-EL-3F-2030,SMDB's  Installation,,1984,136,48,0,45,45,48,4202.598932,0,4202.598932,,,,2016-01-04 08:00,2016-01-09 16:00,,2015-04-26 08:00,2015-05-02 16:00,2015-04-26 08:00,2015-05-02 16:00,2015-04-26 08:00,2015-05-02 16:00,2016-01-04 08:00,2016-01-09 16:00,,PT_Normal,,,,,ypqgraXWK0S5h2L8/5ivZA,gT8UUaTVJkSfO44XtGK9Cw,,,N,0,0,,,2014-04-05 12:27,2014-04-05 13:21,admin,admin,
958,140701,1749,36158,642,0,N,N,N,CP_Drtn,TT_Task,DT_FixedDUR2,TK_NotStart,BL1-MEP-EL-3F-2040,Lighting  Wiring,,1352,88,96,0,241.713,241.713,96,3578.08423,0,3578.08423,,,,2015-10-02 08:00,2015-10-13 16:00,,2015-04-08 08:00,2015-04-21 16:00,2015-04-08 08:00,2015-04-21 16:00,2015-04-08 08:00,2015-04-21 16:00,2015-10-02 08:00,2015-10-13 16:00,,PT_Normal,,,,,+DKMCcW8d0iSRq45mtbGKg,bdVP7LzcZkSxnaF2YiPVgQ,,,N,0,0,,,2014-04-05 12:27,2014-04-05 13:21,admin,admin,
959,140702,1749,36158,642,0,N,N,N,CP_Drtn,TT_Task,DT_FixedDUR2,TK_NotStart,BL1-MEP-EL-3F-2050,Power Points Wiring,,1256,24,96,0,192,192,96,2906.213289,0,2906.213289,,,,2015-09-20 08:00,2015-10-01 16:00,,2015-04-08 08:00,2015-04-21 16:00,2015-04-08 08:00,2015-04-21 16:00,2015-04-08 08:00,2015-04-21 16:00,2015-09-20 08:00,2015-10-01 16:00,,PT_Normal,,,,,A4ulu9DY4Earm3J6cKsC2Q,NqHpRTav60SI7364WQH9BA,,,N,0,0,,,2014-04-05 12:27,2014-04-05 13:21,admin,admin,
960,140703,1749,36158,642,0,N,N,N,CP_Drtn,TT_Task,DT_FixedDUR2,TK_NotStart,BL1-MEP-EL-3F-2000,Cable Tray and Trunking Installation,,1336,72,112,0,336,336,112,9078.448617,0,9078.448617,,,,2015-09-30 08:00,2015-10-13 16:00,,2015-04-08 08:00,2015-04-23 16:00,2015-04-08 08:00,2015-04-23 16:00,2015-04-08 08:00,2015-04-23 16:00,2015-09-30 08:00,2015-10-13 16:00,,PT_Normal,,,,,6Idu3gnt60iH6QEXtHEcQQ,yffFHdK22UeKy1TGRHyahA,,,N,0,0,,,2014-04-05 12:27,2014-04-05 13:21,admin,admin,
961,140704,1749,36158,642,0,N,N,N,CP_Drtn,TT_Task,DT_FixedDUR2,TK_NotStart,BL1-MEP-EL-3F-2060,Emergency Light Wiring,,1384,120,64,0,128,128,64,1210.028798,0,1210.028798,,,,2015-10-06 08:00,2015-10-13 16:00,,2015-04-08 08:00,2015-04-16 16:00,2015-04-08 08:00,2015-04-16 16:00,2015-04-08 08:00,2015-04-16 16:00,2015-10-06 08:00,2015-10-13 16:00,,PT_Normal,,,,,IY3Pd4jd9kiwIrcvlDya8w,1EjrQ7vjjUGSyx8BDc2stw,,,N,0,0,,,2014-04-05 12:27,2014-04-05 13:21,admin,admin,
962,140705,1749,36158,642,0,N,N,N,CP_Drtn,TT_Task,DT_FixedDUR2,TK_NotStart,BL1-MEP-EL-3F-2010,Fire Alarm System Wiring,,1352,88,96,0,192,192,96,7123.009694,0,7123.009694,,,,2015-10-02 08:00,2015-10-13 16:00,,2015-04-08 08:00,2015-04-21 16:00,2015-04-08 08:00,2015-04-21 16:00,2015-04-08 08:00,2015-04-21 16:00,2015-10-02 08:00,2015-10-13 16:00,,PT_Normal,,,,,8BmHC17K5E2QH/iHrRQABA,ecGiidsAZku8fFl4eQG4VQ,,,N,0,0,,,2014-04-05 12:27,2014-04-05 13:21,admin,admin,
963,140706,1749,36158,642,0,N,N,N,CP_Drtn,TT_Task,DT_FixedDUR2,TK_NotStart,BL1-MEP-EL-3F-2070,DB's Installation and Termination,4455,1232,0,96,0,288,288,96,4982.925025,0,4982.925025,,,,2015-10-02 08:00,2015-10-13 16:00,,2015-04-26 08:00,2015-05-09 16:00,2015-04-26 08:00,2015-05-09 16:00,2015-04-26 08:00,2015-05-09 16:00,2015-10-02 08:00,2015-10-13 16:00,,PT_Normal,,,,,jGPuiu46/0mBLr9voIl3Hw,9V63h7DhUEWgwmZlnYyjdw,,,N,0,0,,,2014-04-05 12:27,2014-04-05 13:21,admin,admin,
964,140707,1749,36158,642,0,N,N,N,CP_Drtn,TT_Task,DT_FixedDUR2,TK_NotStart,BL1-MEP-EL-3F-2020,Low Current  System Wiring,4455,1840,392,112,0,244,244,112,38231.783306,0,38231.783306,,,,2015-12-02 08:00,2015-12-15 16:00,,2015-04-08 08:00,2015-04-23 16:00,2015-04-08 08:00,2015-04-23 16:00,2015-04-08 08:00,2015-04-23 16:00,2015-12-02 08:00,2015-12-15 16:00,,PT_Normal,,,,,XDFHTyvfIkGiDnFSWUDPgw,4P3gLs6fWUiNQYZCpg77Eg,,,N,0,0,,,2014-04-05 12:27,2014-04-05 13:21,admin,admin,
965,140708,1749,36150,642,0,N,N,N,CP_Drtn,TT_Task,DT_FixedDUR2,TK_NotStart,BL1-MEP-EL-3F-1000,PVC Back Boxes and Conduits  Fixing in Wall,,944,88,96,0,384,384,96,3319.67233,0,3319.67233,,,,2015-07-04 08:00,2015-07-15 16:00,,2015-02-22 08:00,2015-03-07 16:00,2015-02-22 08:00,2015-03-07 16:00,2015-02-22 08:00,2015-03-07 16:00,2015-07-04 08:00,2015-07-15 16:00,,PT_Normal,,,,,wQy6c5BGoUqLLRlSWRIFeQ,OcQxpb41JEGGzkVOXmEZiQ,,,N,0,0,,,2014-04-05 12:27,2014-04-05 13:21,admin,admin,
966,140709,1749,36150,642,0,N,N,N,CP_Drtn,TT_Task,DT_FixedDUR2,TK_NotStart,BL1-MEP-EL-3F-1010,DB's Inclosure Fixing,4455,1112,136,48,0,96,96,48,2136.399392,0,2136.399392,,,,2015-08-03 08:00,2015-08-08 16:00,,2015-03-04 08:00,2015-03-10 16:00,2015-03-04 08:00,2015-03-10 16:00,2015-03-04 08:00,2015-03-10 16:00,2015-08-03 08:00,2015-08-08 16:00,,PT_Normal,,,,,qN6UshuxykyNlVPq/VMCjQ,pcbGRQKxyk2e6MxuQtwXFQ,,,N,0,0,,,2014-04-05 12:27,2014-04-05 13:21,admin,admin,
967,140710,1749,36315,642,0,N,N,N,CP_Drtn,TT_Task,DT_FixedDUR2,TK_NotStart,BL1-MEP-EL-3F-3020,Lights Fitting Fixing,,1240,0,112,0,244,244,112,7336.659378,0,7336.659378,,,,2015-12-12 08:00,2015-12-25 16:00,,2015-07-10 08:00,2015-07-23 16:00,2015-07-10 08:00,2015-07-23 16:00,2015-07-10 08:00,2015-07-23 16:00,2015-12-12 08:00,2015-12-25 16:00,,PT_Normal,,,,,XweAD7V7fkK06jbwk5EAmQ,xj93fPrW7EaHdM8pcc92wg,,,N,0,0,,,2014-04-05 12:27,2014-04-05 13:21,admin,admin,
968,140711,1749,36315,642,0,N,N,N,CP_Drtn,TT_Task,DT_FixedDUR2,TK_NotStart,BL1-MEP-EL-3F-3050,Sockets and Switches Fixing,,1656,120,64,0,128,128,64,1174.957134,0,1174.957134,,,,2016-01-11 08:00,2016-01-18 16:00,,2015-06-18 08:00,2015-06-25 16:00,2015-06-18 08:00,2015-06-25 16:00,2015-06-18 08:00,2015-06-25 16:00,2016-01-11 08:00,2016-01-18 16:00,,PT_Normal,,,,,7OpjB9Ied0iK70z9DfEU2w,tn9MZ+MuCUi5uY64qCc2VQ,,,N,0,0,,,2014-04-05 12:27,2014-04-05 13:21,admin,admin,
969,140712,1749,36315,642,0,N,N,N,CP_Drtn,TT_Task,DT_FixedDUR2,TK_NotStart,BL1-MEP-EL-3F-3000,Emergency Light Fixing,,1720,120,64,0,128,128,64,5722.024623,0,5722.024623,,,,2016-01-19 08:00,2016-01-26 16:00,,2015-06-18 08:00,2015-06-25 16:00,2015-06-18 08:00,2015-06-25 16:00,2015-06-18 08:00,2015-06-25 16:00,2016-01-19 08:00,2016-01-26 16:00,,PT_Normal,,,,,ma9DhDletE6dKjEc+tvwjQ,cVxPKjlqXk+Y3pVYAK6vAQ,,,N,0,0,,,2014-04-05 12:27,2014-04-05 13:21,admin,admin,
970,140713,1749,36315,642,0,N,N,N,CP_Drtn,TT_Task,DT_FixedDUR2,TK_NotStart,BL1-MEP-EL-3F-3010,Fire Alarm System Detector Installation,,1496,88,96,0,192,192,96,4046.378277,0,4046.378277,,,,2015-12-22 08:00,2016-01-02 16:00,,2015-06-18 08:00,2015-06-29 16:00,2015-06-18 08:00,2015-06-29 16:00,2015-06-18 08:00,2015-06-29 16:00,2015-12-22 08:00,2016-01-02 16:00,,PT_Normal,,,,,7N3qeK/cuk6/rBuT4C5YOA,Y6Y44w6Fe02qOU++6oouKA,,,N,0,0,,,2014-04-05 12:27,2014-04-05 13:21,admin,admin,
971,140714,1749,36315,642,0,N,N,N,CP_Drtn,TT_Task,DT_FixedDUR2,TK_NotStart,BL1-MEP-EL-3F-3070,SMDB's  Termination and Final Connection,,1648,136,48,0,192,192,48,2791.825001,0,2791.825001,,,,2016-01-10 08:00,2016-01-15 16:00,,2015-06-18 08:00,2015-06-23 16:00,2015-06-18 08:00,2015-06-23 16:00,2015-06-18 08:00,2015-06-23 16:00,2016-01-10 08:00,2016-01-15 16:00,,PT_Normal,,,,,Y59xex9G00efnar25NB0CQ,54s9i6r8pUytvWBtwkVWKg,,,N,0,0,,,2014-04-05 12:27,2014-04-05 13:21,admin,admin,
972,140715,1749,36158,642,0,N,N,N,CP_Drtn,TT_Task,DT_FixedDUR2,TK_NotStart,BL1-MEP-EL-3F-3060,Power Cable Puling,,1448,72,112,0,168,168,112,6375.759893,0,6375.759893,,,,2015-11-10 08:00,2015-11-23 16:00,,2015-05-10 08:00,2015-05-25 16:00,2015-05-10 08:00,2015-05-25 16:00,2015-05-10 08:00,2015-05-25 16:00,2015-11-10 08:00,2015-11-23 16:00,,PT_Normal,,,,,pU78Fgx6GE2OHpkgVyHJiQ,E9bkR0pOWkamskHzMpEWRA,,,N,0,0,,,2014-04-05 12:27,2014-04-05 13:21,admin,admin,
973,140716,1749,36315,642,0,N,N,N,CP_Drtn,TT_Task,DT_FixedDUR2,TK_NotStart,BL1-MEP-EL-3F-3030,Despature for Low Current  System Installation,4455,1448,0,112,0,336,336,112,72752.164276,0,72752.164276,,,,2015-12-16 08:00,2015-12-29 16:00,,2015-06-18 08:00,2015-07-01 16:00,2015-06-18 08:00,2015-07-01 16:00,2015-06-18 08:00,2015-07-01 16:00,2015-12-16 08:00,2015-12-29 16:00,,PT_Normal,,,,,plrrbkzjQkKNnuoiIQScAQ,8pJ+bO4t0kCvmdAyKnTFaw,,,N,0,0,,,2014-04-05 12:27,2014-04-05 13:21,admin,admin,
974,140717,1749,36315,642,0,N,N,N,CP_Drtn,TT_Task,DT_FixedDUR2,TK_NotStart,BL1-MEP-EL-3F-3040,Low Current  System Outlet installation and Connection,4455,1736,208,80,0,80,80,80,3870.787498,0,3870.787498,,,,2016-02-04 08:00,2016-02-13 16:00,,2015-07-02 08:00,2015-07-11 16:00,2015-07-02 08:00,2015-07-11 16:00,2015-07-02 08:00,2015-07-11 16:00,2016-02-04 08:00,2016-02-13 16:00,,PT_Normal,,,,,xhtw2Q8epEuq8T4GXknuvA,tH4egex9mkupZJaP2WQXiA,,,N,0,0,,,2014-04-05 12:27,2014-04-05 13:21,admin,admin,
975,140718,1749,36585,642,0,N,N,N,CP_Drtn,TT_Task,DT_FixedDUR2,TK_NotStart,BL1-MEP-FF-B1-1000,Supports  and Hungers installation,,1364,360,96,0,288,288,96,47.857235,0,47.857235,,,,2015-05-18 12:00,2015-06-01 12:00,,2014-10-27 08:00,2014-11-11 16:00,2014-10-27 08:00,2014-11-11 16:00,2014-10-27 08:00,2014-11-11 16:00,2015-05-18 12:00,2015-06-01 12:00,,PT_Normal,,,,,gNV9CcqGG0WiQNEey76Lyw,Q+JYX5XDo0mU7b6qax1Jwg,,,N,0,0,,,2014-04-05 12:27,2014-04-05 13:21,admin,admin,
976,140719,1749,36586,642,0,N,N,N,CP_Drtn,TT_Task,DT_FixedDUR2,TK_NotStart,BL1-MEP-FF-B1-3000,Fire Extinguisher Installation,,1744,32,16,0,8,8,16,1076.993507,0,1076.993507,,,,2016-02-01 08:00,2016-02-02 16:00,,2015-06-28 08:00,2015-06-29 16:00,2015-06-28 08:00,2015-06-29 16:00,2015-06-28 08:00,2015-06-29 16:00,2016-02-01 08:00,2016-02-02 16:00,,PT_Normal,,,,,q+LnUhH0b0O2hgeKnxKDdg,a/PgMalf9UaRryYuqbdexQ,,,N,0,0,,,2014-04-05 12:27,2014-04-05 13:21,admin,admin,
977,140720,1749,36586,642,0,N,N,N,CP_Drtn,TT_Task,DT_FixedDUR2,TK_NotStart,BL1-MEP-FF-B1-3010,Hose reel Cabinet Installation and Connection,,484,0,48,0,192,192,48,1336.852298,0,1336.852298,,,,2015-08-26 12:00,2015-09-01 12:00,,2015-06-27 08:00,2015-07-02 16:00,2015-06-27 08:00,2015-07-02 16:00,2015-06-27 08:00,2015-07-02 16:00,2015-08-26 12:00,2015-09-01 12:00,,PT_Normal,,,,,+kNOl70ZY0SB8ugadyb06A,mmMD8w4pwUeND2zp/dEP8g,,,N,0,0,,,2014-04-05 12:27,2014-04-05 13:21,admin,admin,
978,140721,1749,36587,642,0,N,N,N,CP_Drtn,TT_Task,DT_FixedDUR2,TK_NotStart,BL1-MEP-FF-B1-2000,Fire Fighting Pipes and Fittings Installation,,1004,0,168,0,1008,1008,168,307.83721,0,307.83721,,,,2015-06-01 12:00,2015-06-22 12:00,,2015-01-06 08:00,2015-01-29 16:00,2015-01-06 08:00,2015-01-29 16:00,2015-01-06 08:00,2015-01-29 16:00,2015-06-01 12:00,2015-06-22 12:00,,PT_Normal,,,,,7P45DGKkwU23ns+6avWbVA,BlGEmt7/lE+mKroJQTX5wA,,,N,0,0,,,2014-04-05 12:27,2014-04-05 13:21,admin,admin,
979,140722,1749,36587,642,0,N,N,N,CP_Drtn,TT_Task,DT_FixedDUR2,TK_NotStart,BL1-MEP-FF-B1-2010,Fire Fighting Pipes Pressure Test,,1004,264,48,0,96,96,48,41.857235,0,41.857235,,,,2015-06-22 12:00,2015-06-28 12:00,,2015-01-31 08:00,2015-02-05 16:00,2015-01-31 08:00,2015-02-05 16:00,2015-01-31 08:00,2015-02-05 16:00,2015-06-22 12:00,2015-06-28 12:00,,PT_Normal,,,,,shqi2V5Gq0KTRJfsGnffoQ,6blQ6ZyNP0+irlBbnoJpHA,,,N,0,0,,,2014-04-05 12:27,2014-04-05 13:21,admin,admin,
980,140723,1749,36530,642,0,N,N,N,CP_Drtn,TT_Task,DT_FixedDUR2,TK_NotStart,BL1-MEP-PL-B1-3010,Sanitary Ware Installation Including Connection,,764,0,96,0,383.862,383.862,96,4451.516455,0,4451.516455,,,,2015-08-06 12:00,2015-08-18 12:00,,2015-04-28 08:00,2015-05-11 16:00,2015-04-28 08:00,2015-05-11 16:00,2015-04-28 08:00,2015-05-11 16:00,2015-08-06 12:00,2015-08-18 12:00,,PT_Normal,,,,,BtoT2zH1x0mgIWwUvAt1rg,j7kEWdWEh0e19Ww5aNyQhQ,,,N,0,0,,,2014-04-05 12:27,2014-04-05 13:21,admin,admin,
981,140724,1749,36530,642,0,N,N,N,CP_Drtn,TT_Task,DT_FixedDUR2,TK_NotStart,BL1-MEP-PL-B1-3020,Sanitary Ware Accessories Installation,,828,88,48,0,36.45,36.45,48,166.215378,0,166.215378,,,,2015-08-26 12:00,2015-09-01 12:00,,2015-05-12 08:00,2015-05-18 16:00,2015-05-12 08:00,2015-05-18 16:00,2015-05-12 08:00,2015-05-18 16:00,2015-08-26 12:00,2015-09-01 12:00,,PT_Normal,,,,,spmF1i3CoU6WoaEFGUSF8A,PiklggQ4rUyI4BOVVi7QXQ,,,N,0,0,,,2014-04-05 12:27,2014-04-05 13:21,admin,admin,
982,140725,1749,36591,642,0,N,N,N,CP_Drtn,TT_Task,DT_FixedDUR2,TK_NotStart,BL1-MEP-PL-B1-3000,Manhole Covers  Installation,,2728,2072,48,0,37.5,37.5,48,494.574212,0,494.574212,,,,2016-02-08 08:00,2016-02-13 16:00,,2015-02-17 08:00,2015-02-23 16:00,2015-02-17 08:00,2015-02-23 16:00,2015-02-17 08:00,2015-02-23 16:00,2016-02-08 08:00,2016-02-13 16:00,,PT_Normal,,,,,+ePzj2iQ0UiCveT1vWQoiA,ThmxWRZLFk20OtyjPkpFrg,,,N,0,0,,,2014-04-05 12:27,2014-04-05 13:21,admin,admin,
983,140726,1749,36490,642,0,N,N,N,CP_Drtn,TT_Task,DT_FixedDUR2,TK_NotStart,BL1-MEP-PL-B1-1000,Low Level Water Supply Pipes Installation,,932,0,144,0,42,42,144,731.216846,0,731.216846,,,,2015-03-16 12:00,2015-04-06 12:00,,2014-10-27 08:00,2014-11-18 16:00,2014-10-27 08:00,2014-11-18 16:00,2014-10-27 08:00,2014-11-18 16:00,2015-03-16 12:00,2015-04-06 12:00,,PT_Normal,,,,,ha5dju88i0uT0SEEVbtK7Q,VrprsYtGrkmgVrHuIiAGdQ,,,N,0,0,,,2014-04-05 12:27,2014-04-05 13:21,admin,admin,
984,140727,1749,36490,642,0,N,N,N,CP_Drtn,TT_Task,DT_FixedDUR2,TK_NotStart,BL1-MEP-PL-B1-1010,Low Level Drainage Pipes Installation,,932,0,144,0,12.67,12.67,144,100.429262,0,100.429262,,,,2015-03-16 12:00,2015-04-06 12:00,,2014-10-27 08:00,2014-11-18 16:00,2014-10-27 08:00,2014-11-18 16:00,2014-10-27 08:00,2014-11-18 16:00,2015-03-16 12:00,2015-04-06 12:00,,PT_Normal,,,,,5COqMIWu4UyIbrMWKnJfEw,Tfxn7dGyzkufPOE3xZDo5w,,,N,0,0,,,2014-04-05 12:27,2014-04-05 13:21,admin,admin,
985,140728,1749,36490,642,0,N,N,N,CP_Drtn,TT_Task,DT_FixedDUR2,TK_NotStart,BL1-MEP-PL-B1-1020,Supports  installation for High level Pipes,,980,48,96,0,16.352,16.352,96,831.682549,0,831.682549,,,,2015-03-23 12:00,2015-04-06 12:00,,2014-10-27 08:00,2014-11-11 16:00,2014-10-27 08:00,2014-11-11 16:00,2014-10-27 08:00,2014-11-11 16:00,2015-03-23 12:00,2015-04-06 12:00,,PT_Normal,,,,,QW2sgjsBp0qbTrWuvCPbAg,b1NsGiAp1k6tnmisfUm41Q,,,N,0,0,,,2014-04-05 12:27,2014-04-05 13:21,admin,admin,
986,140729,1749,36591,642,0,N,N,N,CP_Drtn,TT_Task,DT_FixedDUR2,TK_NotStart,BL1-MEP-PL-B1-2020,Parking Drain Installation,,932,0,48,0,48,48,48,553.83323,0,553.83323,,,,2015-06-16 12:00,2015-06-22 12:00,,2015-02-03 08:00,2015-02-09 16:00,2015-02-03 08:00,2015-02-09 16:00,2015-02-03 08:00,2015-02-09 16:00,2015-06-16 12:00,2015-06-22 12:00,,PT_Normal,,,,,/Dd45SElWUaUnaIItfjuCw,YWXk+t+UGUGNpnmBfiORMA,,,N,0,0,,,2014-04-05 12:27,2014-04-05 13:21,admin,admin,
987,140730,1749,36591,642,0,N,N,N,CP_Drtn,TT_Task,DT_FixedDUR2,TK_NotStart,BL1-MEP-PL-B1-2010,High Level Water Supply Pipes and Fittings Installation,,1084,0,168,0,150.02,150.02,168,1329.597866,0,1329.597866,,,,2015-05-25 12:00,2015-06-16 12:00,,2014-12-16 08:00,2015-01-11 16:00,2014-12-16 08:00,2015-01-11 16:00,2014-12-16 08:00,2015-01-11 16:00,2015-05-25 12:00,2015-06-16 12:00,,PT_Normal,,,,,kGeF5NJgb02WgfHoOYwx5g,gdNE8UxMg0Gyeud/5gpjmw,,,N,0,0,,,2014-04-05 12:27,2014-04-05 13:21,admin,admin,
988,140731,1749,36591,642,0,N,N,N,CP_Drtn,TT_Task,DT_FixedDUR2,TK_NotStart,BL1-MEP-PL-B1-2000,High Level Drainage Pipes Installation,,1124,32,168,0,244.38,244.38,168,6583.525267,0,6583.525267,,,,2015-05-25 12:00,2015-06-16 12:00,,2014-12-10 08:00,2015-01-05 16:00,2014-12-10 08:00,2015-01-05 16:00,2014-12-10 08:00,2015-01-05 16:00,2015-05-25 12:00,2015-06-16 12:00,,PT_Normal,,,,,z2t/uCmTCUWIqlzo1weBzg,Vx5kckeq90G5TDPGdChnHw,,,N,0,0,,,2014-04-05 12:27,2014-04-05 13:21,admin,admin,
989,140732,1749,36591,642,0,N,N,N,CP_Drtn,TT_Task,DT_FixedDUR2,TK_NotStart,BL1-MEP-PL-B1-2040,Water Supply Pipes Pressure Test,4456,1132,120,48,0,48,48,48,151.744312,0,151.744312,,,,2015-06-22 12:00,2015-06-28 12:00,,2015-01-12 08:00,2015-01-18 16:00,2015-01-12 08:00,2015-01-18 16:00,2015-01-12 08:00,2015-01-18 16:00,2015-06-22 12:00,2015-06-28 12:00,,PT_Normal,,,,,7D9UD3dEeUm56lCzh4zS3w,vr/6AD8C9kulUztsYcPdXw,,,N,0,0,,,2014-04-05 12:27,2014-04-05 13:21,admin,admin,
990,140733,1749,36591,642,0,N,N,N,CP_Drtn,TT_Task,DT_FixedDUR2,TK_NotStart,BL1-MEP-PL-B1-2030,Drainage Pipes Gravity Test,,932,0,48,0,48,48,48,826.240719,0,826.240719,,,,2015-06-22 12:00,2015-06-28 12:00,,2015-02-10 08:00,2015-02-16 16:00,2015-02-10 08:00,2015-02-16 16:00,2015-02-10 08:00,2015-02-16 16:00,2015-06-22 12:00,2015-06-28 12:00,,PT_Normal,,,,,aC/uedOi3UOC5/JvDJw6SQ,cIjK2J+Mc0aQj+MyOLjn3g,,,N,0,0,,,2014-04-05 12:27,2014-04-05 13:21,admin,admin,
991,140734,1749,36425,642,0,N,N,N,CP_Drtn,TT_Task,DT_FixedDUR2,TK_NotStart,BL1-MEP-AC-B1-3000,Grills and Diffusers Fixing,,748,0,80,0,320,320,80,426.81116,0,426.81116,,,,2015-08-16 12:00,2015-08-26 12:00,,2015-05-12 08:00,2015-05-23 16:00,2015-05-12 08:00,2015-05-23 16:00,2015-05-12 08:00,2015-05-23 16:00,2015-08-16 12:00,2015-08-26 12:00,,PT_Normal,,,,,tFfgWYHu5EWuvvi9Fh8/9g,xeQVxCom3kqBJJBGeKH9Kg,,,N,0,0,,,2014-04-05 12:27,2014-04-05 13:21,admin,admin,
992,140735,1749,36385,642,0,N,N,N,CP_Drtn,TT_Task,DT_FixedDUR2,TK_NotStart,BL1-MEP-AC-B1-1000,Supports and Hungers Fixing,,1108,32,240,0,192,192,240,148.114912,0,148.114912,,,,2015-04-11 12:00,2015-05-16 12:00,,2014-10-27 08:00,2014-12-02 16:00,2014-10-27 08:00,2014-12-02 16:00,2014-10-27 08:00,2014-12-02 16:00,2015-04-11 12:00,2015-05-16 12:00,,PT_Normal,,,,,l4/8cN+aTEyuWUo6cQZcAA,S93B3doG6kqtqCsY8V2sKg,,,N,0,0,,,2014-04-05 12:27,2014-04-05 13:21,admin,admin,
993,140736,1749,36595,642,0,N,N,N,CP_Drtn,TT_Task,DT_FixedDUR2,TK_NotStart,BL1-MEP-AC-B1-2000,Fresh Air Duct and Extract Duct Installation,4454,916,0,168,0,1008,1008,168,2029.377292,0,2029.377292,,,,2015-05-16 12:00,2015-06-08 12:00,,2014-12-31 08:00,2015-01-26 16:00,2014-12-31 08:00,2015-01-26 16:00,2014-12-31 08:00,2015-01-26 16:00,2015-05-16 12:00,2015-06-08 12:00,,PT_Normal,,,,,S04wGfxQi0eFXuAwAPux7g,4Bh0OHkSYEGOF4U2ChXNcw,,,N,0,0,,,2014-04-05 12:27,2014-04-05 13:21,admin,admin,
994,140737,1749,36595,642,0,N,N,N,CP_Drtn,TT_Task,DT_FixedDUR2,TK_NotStart,BL1-MEP-AC-B1-2010,Duct Accessories Installation,4457,964,56,112,0,448,448,112,250.167804,0,250.167804,,,,2015-06-14 12:00,2015-06-28 12:00,,2015-01-27 08:00,2015-02-11 16:00,2015-01-27 08:00,2015-02-11 16:00,2015-01-27 08:00,2015-02-11 16:00,2015-06-14 12:00,2015-06-28 12:00,,PT_Normal,,,,,06zoSY9spEiCmWn1MoC9SQ,RyDZiVzxv0ykPOPSNa+VBw,,,N,0,0,,,2014-04-05 12:27,2014-04-05 13:21,admin,admin,
995,140738,1749,36179,642,0,N,N,N,CP_Drtn,TT_Task,DT_FixedDUR2,TK_NotStart,BL1-MEP-EL-B1-1000,PVC Back Boxes and Conduits  Fixing in Wall,,1052,120,96,0,384,384,96,3319.67233,0,3319.67233,,,,2015-03-23 12:00,2015-04-06 12:00,,2014-10-15 08:00,2014-10-29 16:00,2014-10-15 08:00,2014-10-29 16:00,2014-10-15 08:00,2014-10-29 16:00,2015-03-23 12:00,2015-04-06 12:00,,PT_Normal,,,,,LdaWVEkK8Ueq3mh/dgb/aQ,6mRDna2Jj0Oa86bUgUzbqA,,,N,0,0,,,2014-04-05 12:27,2014-04-05 13:21,admin,admin,
996,140739,1749,36179,642,0,N,N,N,CP_Drtn,TT_Task,DT_FixedDUR2,TK_NotStart,BL1-MEP-EL-B1-1010,DB's Inclosure Fixing,4455,1028,96,48,0,96,96,48,2136.399392,0,2136.399392,,,,2015-03-30 12:00,2015-04-06 12:00,,2014-10-27 08:00,2014-11-04 16:00,2014-10-27 08:00,2014-11-04 16:00,2014-10-27 08:00,2014-11-04 16:00,2015-03-30 12:00,2015-04-06 12:00,,PT_Normal,,,,,0zItzPe/i0uPD+fVSPaxUw,Xpysdd1tvE2nFbxcZ6ktOA,,,N,0,0,,,2014-04-05 12:27,2014-04-05 13:21,admin,admin,
997,140740,1749,36180,642,0,N,N,N,CP_Drtn,TT_Task,DT_FixedDUR2,TK_NotStart,BL1-MEP-EL-B1-2070,"SMDB's , MDB's  Installation",,740,0,96,0,336,336,96,4208.598932,0,4208.598932,,,,2015-06-16 12:00,2015-06-28 12:00,,2015-03-03 08:00,2015-03-16 16:00,2015-03-03 08:00,2015-03-16 16:00,2015-03-03 08:00,2015-03-16 16:00,2015-06-16 12:00,2015-06-28 12:00,,PT_Normal,,,,,LjlfUMScn0CLE49XMAPXdQ,nRLkxdbgnkKuTqT899VP7Q,,,N,0,0,,,2014-04-05 12:27,2014-04-05 13:21,admin,admin,
998,140741,1749,36180,642,0,N,N,N,CP_Drtn,TT_Task,DT_FixedDUR2,TK_NotStart,BL1-MEP-EL-B1-2040,BMS System Wiring,,1172,432,64,0,186,186,64,15191.435697,0,15191.435697,,,,2015-06-20 12:00,2015-06-28 12:00,,2015-01-04 08:00,2015-01-12 16:00,2015-01-04 08:00,2015-01-12 16:00,2015-01-04 08:00,2015-01-12 16:00,2015-06-20 12:00,2015-06-28 12:00,,PT_Normal,,,,,pS8aDmVLz06Pbw7JF2C4Eg,2xAtl/Tz4Ua+FH9DNciU9Q,,,N,0,0,,,2014-04-05 12:27,2014-04-05 13:21,admin,admin,
999,140742,1749,36180,642,0,N,N,N,CP_Drtn,TT_Task,DT_FixedDUR2,TK_NotStart,BL1-MEP-EL-B1-2020,Lighting  Wiring,,1292,104,96,0,241.713,241.713,96,3578.08423,0,3578.08423,,,,2015-06-16 12:00,2015-06-28 12:00,,2014-12-10 08:00,2014-12-23 16:00,2014-12-10 08:00,2014-12-23 16:00,2014-12-10 08:00,2014-12-23 16:00,2015-06-16 12:00,2015-06-28 12:00,,PT_Normal,,,,,Q9zVDwzeD0OEgbCd5mBc6A,zFzJEl9Y/Uenm/4onclamA,,,N,0,0,,,2014-04-05 12:27,2014-04-05 13:21,admin,admin,
1000,140743,1749,36180,642,0,N,N,N,CP_Drtn,TT_Task,DT_FixedDUR2,TK_NotStart,BL1-MEP-EL-B1-2030,Power Points Wiring,,1196,24,96,0,192,192,96,2906.213289,0,2906.213289,,,,2015-06-04 12:00,2015-06-16 12:00,,2014-12-10 08:00,2014-12-23 16:00,2014-12-10 08:00,2014-12-23 16:00,2014-12-10 08:00,2014-12-23 16:00,2015-06-04 12:00,2015-06-16 12:00,,PT_Normal,,,,,0DvuiGuiVkmDzTE/jTFAdA,8XqUu/cPC0SLenVxx2rOUQ,,,N,0,0,,,2014-04-05 12:27,2014-04-05 13:21,admin,admin,
1001,140744,1749,36180,642,0,N,N,N,CP_Drtn,TT_Task,DT_FixedDUR2,TK_NotStart,BL1-MEP-EL-B1-2000,Cable Tray and Trunking Installation,,1220,32,168,0,336,336,168,9085.448617,0,9085.448617,,,,2015-06-07 12:00,2015-06-28 12:00,,2014-12-10 08:00,2015-01-05 16:00,2014-12-10 08:00,2015-01-05 16:00,2014-12-10 08:00,2015-01-05 16:00,2015-06-07 12:00,2015-06-28 12:00,,PT_Normal,,,,,VOZA+hU4TUuAFn9ANDTtjQ,gUW69LjxxUCS1COgoo69vg,,,N,0,0,,,2014-04-05 12:27,2014-04-05 13:21,admin,admin,
1002,140745,1749,36180,642,0,N,N,N,CP_Drtn,TT_Task,DT_FixedDUR2,TK_NotStart,BL1-MEP-EL-B1-2050,Emergency Light Wiring,,1324,136,64,0,128,128,64,1210.028798,0,1210.028798,,,,2015-06-20 12:00,2015-06-28 12:00,,2014-12-10 08:00,2014-12-18 16:00,2014-12-10 08:00,2014-12-18 16:00,2014-12-10 08:00,2014-12-18 16:00,2015-06-20 12:00,2015-06-28 12:00,,PT_Normal,,,,,WmUD2JvDWUWPkrYxcXkPIw,uqh0wdiBC0CU9qt+LAFBKA,,,N,0,0,,,2014-04-05 12:27,2014-04-05 13:21,admin,admin,
1003,140746,1749,36180,642,0,N,N,N,CP_Drtn,TT_Task,DT_FixedDUR2,TK_NotStart,BL1-MEP-EL-B1-2010,Fire Alarm System Wiring,,1252,64,96,0,192,192,96,7123.009694,0,7123.009694,,,,2015-06-16 12:00,2015-06-28 12:00,,2014-12-16 08:00,2014-12-29 16:00,2014-12-16 08:00,2014-12-29 16:00,2014-12-16 08:00,2014-12-29 16:00,2015-06-16 12:00,2015-06-28 12:00,,PT_Normal,,,,,kaBHM0ja80+IpbVtETyLNg,YQxc+TqojU2/pTJuIlJ8cQ,,,N,0,0,,,2014-04-05 12:27,2014-04-05 13:21,admin,admin,
1004,140747,1749,36180,642,0,N,N,N,CP_Drtn,TT_Task,DT_FixedDUR2,TK_NotStart,BL1-MEP-EL-B1-2060,DB's Installation and Termination,4455,1172,0,96,0,288,288,96,4982.925025,0,4982.925025,,,,2015-06-16 12:00,2015-06-28 12:00,,2014-12-28 08:00,2015-01-12 16:00,2014-12-28 08:00,2015-01-12 16:00,2014-12-28 08:00,2015-01-12 16:00,2015-06-16 12:00,2015-06-28 12:00,,PT_Normal,,,,,jFkujF1lnE+Gvhf2sBinkg,Xr/liESn+k2O6RvOxz2gZQ,,,N,0,0,,,2014-04-05 12:27,2014-04-05 13:21,admin,admin,
1005,140748,1749,36258,642,0,N,N,N,CP_Drtn,TT_Task,DT_FixedDUR2,TK_NotStart,BL1-MEP-EL-B1-3020,Lights Fitting Fixing,,700,0,112,0,244,244,112,7336.659378,0,7336.659378,,,,2015-08-10 12:00,2015-08-24 12:00,,2015-05-12 08:00,2015-05-27 16:00,2015-05-12 08:00,2015-05-27 16:00,2015-05-12 08:00,2015-05-27 16:00,2015-08-10 12:00,2015-08-24 12:00,,PT_Normal,,,,,DDf2tbFkYEKVzr7m3rbLGw,XxqPK1LkTEe9YzYYuwd5hg,,,N,0,0,,,2014-04-05 12:27,2014-04-05 13:21,admin,admin,
1006,140749,1749,36258,642,0,N,N,N,CP_Drtn,TT_Task,DT_FixedDUR2,TK_NotStart,BL1-MEP-EL-B1-3040,Sockets and Switches Fixing,,1052,0,64,0,128,128,64,1174.957134,0,1174.957134,,,,2015-08-22 12:00,2015-08-30 12:00,,2015-04-05 08:00,2015-04-13 16:00,2015-04-05 08:00,2015-04-13 16:00,2015-04-05 08:00,2015-04-13 16:00,2015-08-22 12:00,2015-08-30 12:00,,PT_Normal,,,,,EWT/oTzAG0WEKV+d6bRyYw,GbvdX1jvNkaaZcHD4xR5Yw,,,N,0,0,,,2014-04-05 12:27,2014-04-05 13:21,admin,admin,
1007,140750,1749,36258,642,0,N,N,N,CP_Drtn,TT_Task,DT_FixedDUR2,TK_NotStart,BL1-MEP-EL-B1-3030,Emergency Light Fixing,,1132,0,64,0,128,128,64,5722.024623,0,5722.024623,,,,2015-08-22 12:00,2015-08-30 12:00,,2015-03-24 08:00,2015-04-01 16:00,2015-03-24 08:00,2015-04-01 16:00,2015-03-24 08:00,2015-04-01 16:00,2015-08-22 12:00,2015-08-30 12:00,,PT_Normal,,,,,r422pqkExkC/fsH8iDHfpg,GCb7DzkZMUWIvOzg7dmEvA,,,N,0,0,,,2014-04-05 12:27,2014-04-05 13:21,admin,admin,
1008,140751,1749,36258,642,0,N,N,N,CP_Drtn,TT_Task,DT_FixedDUR2,TK_NotStart,BL1-MEP-EL-B1-3000,CO2 System Installation,,1520,480,48,0,179.65,179.65,48,21033.761938,0,21033.761938,,,,2016-01-13 08:00,2016-01-18 16:00,,2015-07-07 08:00,2015-07-12 16:00,2015-07-07 08:00,2015-07-12 16:00,2015-07-07 08:00,2015-07-12 16:00,2016-01-13 08:00,2016-01-18 16:00,,PT_Normal,,,,,5m7v11SuoUW3g/MOlLlNyQ,8/He6cg47UuLtjwXhwhdFA,,,N,0,0,,,2014-04-05 12:27,2014-04-05 13:21,admin,admin,
1009,140752,1749,36258,642,0,N,N,N,CP_Drtn,TT_Task,DT_FixedDUR2,TK_NotStart,BL1-MEP-EL-B1-3010,Fire Alarm System Detector Installation,,1068,0,96,0,192,192,96,4046.378277,0,4046.378277,,,,2015-08-14 12:00,2015-08-26 12:00,,2015-03-24 08:00,2015-04-06 16:00,2015-03-24 08:00,2015-04-06 16:00,2015-03-24 08:00,2015-04-06 16:00,2015-08-14 12:00,2015-08-26 12:00,,PT_Normal,,,,,+lxHi5Hdv069+ds41sl/RQ,d5n3XXNRAEmCE9Nsfyg83g,,,N,0,0,,,2014-04-05 12:27,2014-04-05 13:21,admin,admin,
1010,140753,1749,36258,642,0,N,N,N,CP_Drtn,TT_Task,DT_FixedDUR2,TK_NotStart,BL1-MEP-EL-B1-3060,"SMDB's  , MDB's Termination and Final Connection",,1116,0,96,0,384,384,96,20737.637079,0,20737.637079,,,,2015-08-20 12:00,2015-09-01 12:00,,2015-03-24 08:00,2015-04-06 16:00,2015-03-24 08:00,2015-04-06 16:00,2015-03-24 08:00,2015-04-06 16:00,2015-08-20 12:00,2015-09-01 12:00,,PT_Normal,,,,,SCPFDXoKpkKQ0rNIo5Z25w,EXRbHTdW102Gk/oB3Mzx0A,,,N,0,0,,,2014-04-05 12:27,2014-04-05 13:21,admin,admin,
1011,140754,1749,36180,642,0,N,N,N,CP_Drtn,TT_Task,DT_FixedDUR2,TK_NotStart,BL1-MEP-EL-B1-3050,Power Cable Puling,,1468,88,112,0,168,168,112,13646.333768,0,13646.333768,,,,2015-08-04 12:00,2015-08-18 12:00,,2015-01-13 08:00,2015-01-28 16:00,2015-01-13 08:00,2015-01-28 16:00,2015-01-13 08:00,2015-01-28 16:00,2015-08-04 12:00,2015-08-18 12:00,,PT_Normal,,,,,5pRwZux7zk+r6MsDzwcXGw,GWO5ffJOa0K5dRi5eFflFQ,,,N,0,0,,,2014-04-05 12:27,2014-04-05 13:21,admin,admin,
1012,140755,1749,36606,642,0,N,N,N,CP_Drtn,TT_Task,DT_FixedDUR2,TK_NotStart,BL1-MEP-PL-5F-1000,Low Level Water Supply Pipes Installation,,864,0,96,0,42,42,96,725.216846,0,725.216846,,,,2015-08-18 08:00,2015-08-29 16:00,,2015-04-27 08:00,2015-05-10 16:00,2015-04-27 08:00,2015-05-10 16:00,2015-04-27 08:00,2015-05-10 16:00,2015-08-18 08:00,2015-08-29 16:00,,PT_Normal,,,,,R+fUEgkdh0q3/FcmAQ+FGw,EdxosefL2kie2thGtzAVdg,,,N,0,0,,,2014-04-05 12:27,2014-04-05 13:21,admin,admin,
1013,140756,1749,36606,642,0,N,N,N,CP_Drtn,TT_Task,DT_FixedDUR2,TK_NotStart,BL1-MEP-PL-5F-1010,Low Level Drainage Pipes Installation,,864,0,96,0,12.67,12.67,96,2291.461713,0,2291.461713,,,,2015-08-18 08:00,2015-08-29 16:00,,2015-04-27 08:00,2015-05-10 16:00,2015-04-27 08:00,2015-05-10 16:00,2015-04-27 08:00,2015-05-10 16:00,2015-08-18 08:00,2015-08-29 16:00,,PT_Normal,,,,,vG07WsRCO0OzvwJ9CEl3dA,jvIaFTvmDEK/HjZH3k3bnA,,,N,0,0,,,2014-04-05 12:27,2014-04-05 13:21,admin,admin,
1014,140757,1749,36608,642,0,N,N,N,CP_Drtn,TT_Task,DT_FixedDUR2,TK_NotStart,BL1-MEP-PL-5F-1030,Floor Drain Installation,,864,0,48,0,6,6,48,554.143324,0,554.143324,,,,2015-11-01 08:00,2015-11-06 16:00,,2015-07-16 08:00,2015-07-21 16:00,2015-07-16 08:00,2015-07-21 16:00,2015-07-16 08:00,2015-07-21 16:00,2015-11-01 08:00,2015-11-06 16:00,,PT_Normal,,,,,d5jOU9sCPEGJHTMPt/hFXg,u5fROwW0bUeMCleF29LgLQ,,,N,0,0,,,2014-04-05 12:27,2014-04-05 13:21,admin,admin,
1015,140758,1749,36606,642,0,N,N,N,CP_Drtn,TT_Task,DT_FixedDUR2,TK_NotStart,BL1-MEP-PL-5F-1020,Supports  installation for High level Pipes,,1200,0,96,0,16.352,16.352,96,831.682549,0,831.682549,,,,2015-09-29 08:00,2015-10-10 16:00,,2015-04-27 08:00,2015-05-10 16:00,2015-04-27 08:00,2015-05-10 16:00,2015-04-27 08:00,2015-05-10 16:00,2015-09-29 08:00,2015-10-10 16:00,,PT_Normal,,,,,4PjHh9QW50Sn/sje/oofdw,Rw07gVm1kUeHivzPqFMBjg,,,N,0,0,,,2014-04-05 12:27,2014-04-05 13:21,admin,admin,
1016,140759,1749,36607,642,0,N,N,N,CP_Drtn,TT_Task,DT_FixedDUR2,TK_NotStart,BL1-MEP-PL-5F-3000,Sanitary Ware Installation Including Connection,,872,0,112,0,383.862,383.862,112,4453.516455,0,4453.516455,,,,2015-12-20 08:00,2016-01-02 16:00,,2015-09-02 08:00,2015-09-15 16:00,2015-09-02 08:00,2015-09-15 16:00,2015-09-02 08:00,2015-09-15 16:00,2015-12-20 08:00,2016-01-02 16:00,,PT_Normal,,,,,LF/EPDD5cUaESvvkd/dNDQ,15SnEbh9RU+8oN4REM/8QA,,,N,0,0,,,2014-04-05 12:27,2014-04-05 13:21,admin,admin,
1017,140760,1749,36607,642,0,N,N,N,CP_Drtn,TT_Task,DT_FixedDUR2,TK_NotStart,BL1-MEP-PL-5F-3010,Sanitary Ware Accessories Installation,,936,0,48,0,36.45,36.45,48,166.215378,0,166.215378,,,,2016-01-11 08:00,2016-01-16 16:00,,2015-09-16 08:00,2015-09-21 16:00,2015-09-16 08:00,2015-09-21 16:00,2015-09-16 08:00,2015-09-21 16:00,2016-01-11 08:00,2016-01-16 16:00,,PT_Normal,,,,,v/rTHeR/K0S642KackwEqg,WV7jmxji/kqXNyd6vQr60g,,,N,0,0,,,2014-04-05 12:27,2014-04-05 13:21,admin,admin,
1018,140761,1749,36608,642,0,N,N,N,CP_Drtn,TT_Task,DT_FixedDUR2,TK_NotStart,BL1-MEP-PL-5F-2010,High Level Water Supply Pipes and Fittings Installation,,1056,0,168,0,150.02,150.02,168,1329.597866,0,1329.597866,,,,2015-10-11 08:00,2015-10-31 16:00,,2015-06-01 08:00,2015-06-21 16:00,2015-06-01 08:00,2015-06-21 16:00,2015-06-01 08:00,2015-06-21 16:00,2015-10-11 08:00,2015-10-31 16:00,,PT_Normal,,,,,iMJLzV2BnUuP+SItcivERA,t8f4gueB5UasMe4PHJce2w,,,N,0,0,,,2014-04-05 12:27,2014-04-05 13:21,admin,admin,
1019,140762,1749,36608,642,0,N,N,N,CP_Drtn,TT_Task,DT_FixedDUR2,TK_NotStart,BL1-MEP-PL-5F-2000,High Level Drainage Pipes Installation,,1056,0,168,0,244.38,244.38,168,6583.525267,0,6583.525267,,,,2015-10-11 08:00,2015-10-31 16:00,,2015-06-01 08:00,2015-06-21 16:00,2015-06-01 08:00,2015-06-21 16:00,2015-06-01 08:00,2015-06-21 16:00,2015-10-11 08:00,2015-10-31 16:00,,PT_Normal,,,,,HwQyu89F7U+3zS44B3MVog,Nuehw5NWN0enLAvgFZQSxw,,,N,0,0,,,2014-04-05 12:27,2014-04-05 13:21,admin,admin,
1020,140763,1749,36608,642,0,N,N,N,CP_Drtn,TT_Task,DT_FixedDUR2,TK_NotStart,BL1-MEP-PL-5F-2030,Water Supply Pipes Pressure Test,4456,1104,120,48,0,48,48,48,151.744312,0,151.744312,,,,2015-11-07 08:00,2015-11-12 16:00,,2015-06-22 08:00,2015-06-27 16:00,2015-06-22 08:00,2015-06-27 16:00,2015-06-22 08:00,2015-06-27 16:00,2015-11-07 08:00,2015-11-12 16:00,,PT_Normal,,,,,A5t9MbQLmUyB0Tv+E1CpWg,pwwTPXsez0+hji0dU95Dlg,,,N,0,0,,,2014-04-05 12:27,2014-04-05 13:21,admin,admin,
1021,140764,1749,36608,642,0,N,N,N,CP_Drtn,TT_Task,DT_FixedDUR2,TK_NotStart,BL1-MEP-PL-5F-2020,Drainage Pipes Gravity Test,,864,0,48,0,48,48,48,826.240719,0,826.240719,,,,2015-11-07 08:00,2015-11-12 16:00,,2015-07-22 08:00,2015-07-27 16:00,2015-07-22 08:00,2015-07-27 16:00,2015-07-22 08:00,2015-07-27 16:00,2015-11-07 08:00,2015-11-12 16:00,,PT_Normal,,,,,hrvoCdbhgU62OLxWU7hi6A,HEw/0+bCb0avGrE0CQF/bw,,,N,0,0,,,2014-04-05 12:27,2014-04-05 13:21,admin,admin,
1022,140765,1749,36610,642,0,N,N,N,CP_Drtn,TT_Task,DT_FixedDUR2,TK_NotStart,BL1-MEP-FF-5F-3000,Fire Extinguisher Installation,,1192,104,16,0,8,8,16,1076.993507,0,1076.993507,,,,2016-02-13 08:00,2016-02-14 16:00,,2015-09-17 08:00,2015-09-18 16:00,2015-09-17 08:00,2015-09-18 16:00,2015-09-17 08:00,2015-09-18 16:00,2016-02-13 08:00,2016-02-14 16:00,,PT_Normal,,,,,+O0xFETtG0KDWcbmbwS0VA,/EcstDoFKE61la1VswWqIA,,,N,0,0,,,2014-04-05 12:27,2014-04-05 13:21,admin,admin,
1023,140766,1749,36610,642,0,N,N,N,CP_Drtn,TT_Task,DT_FixedDUR2,TK_NotStart,BL1-MEP-FF-5F-3010,Hose reel Cabinet Installation and Connection,,1488,32,48,0,192,192,48,1336.852298,0,1336.852298,,,,2016-02-05 08:00,2016-02-10 16:00,,2015-08-03 08:00,2015-08-08 16:00,2015-08-03 08:00,2015-08-08 16:00,2015-08-03 08:00,2015-08-08 16:00,2016-02-05 08:00,2016-02-10 16:00,,PT_Normal,,,,,mi/MVUXhRU2ajDpIDCtUZQ,JsO3RF7RlUSjePaXX5vVWA,,,N,0,0,,,2014-04-05 12:27,2014-04-05 13:21,admin,admin,
1024,140767,1749,36612,642,0,N,N,N,CP_Drtn,TT_Task,DT_FixedDUR2,TK_NotStart,BL1-MEP-AC-5F-1000,Supports and Hungers Fixing,,1128,0,96,0,192,192,96,338.467259,0,338.467259,,,,2015-09-20 08:00,2015-10-01 16:00,,2015-04-27 08:00,2015-05-10 16:00,2015-04-27 08:00,2015-05-10 16:00,2015-04-27 08:00,2015-05-10 16:00,2015-09-20 08:00,2015-10-01 16:00,,PT_Normal,,,,,+b4RSTS6lkqTM4rl3PL02g,eIZMxfMP30KZ9M39v6LXag,,,N,0,0,,,2014-04-05 12:27,2014-04-05 13:21,admin,admin,
1025,140768,1749,36513,642,0,N,N,N,CP_Drtn,TT_Task,DT_FixedDUR2,TK_NotStart,BL1-MEP-AC-5F-2020,Duct Installation and Insulation,4454,992,0,168,0,263,263,168,4350.939473,0,4350.939473,,,,2015-10-03 08:00,2015-10-23 16:00,,2015-06-01 08:00,2015-06-21 16:00,2015-06-01 08:00,2015-06-21 16:00,2015-06-01 08:00,2015-06-21 16:00,2015-10-03 08:00,2015-10-23 16:00,,PT_Normal,,,,,6n9xfG32GkiZKnyFIhfUaQ,Gir2IgXZKkq8PXqgmQ7N9w,,,N,0,0,,,2014-04-05 12:27,2014-04-05 13:21,admin,admin,
1026,140769,1749,36513,642,0,N,N,N,CP_Drtn,TT_Task,DT_FixedDUR2,TK_NotStart,BL1-MEP-AC-5F-2070,Duct Accessories Installation,4457,1040,56,112,0,448,448,112,666.965527,0,666.965527,,,,2015-10-30 08:00,2015-11-12 16:00,,2015-06-22 08:00,2015-07-05 16:00,2015-06-22 08:00,2015-07-05 16:00,2015-06-22 08:00,2015-07-05 16:00,2015-10-30 08:00,2015-11-12 16:00,,PT_Normal,,,,,FD3Q+Ghr5k+Ml6PhzLToVw,t/CAqac1fU+6OACnHTNeWg,,,N,0,0,,,2014-04-05 12:27,2014-04-05 13:21,admin,admin,
1027,140770,1749,36513,642,0,N,N,N,CP_Drtn,TT_Task,DT_FixedDUR2,TK_NotStart,BL1-MEP-AC-5F-2010,FCU's Installation,4457,1184,16,64,0,192,192,64,6000.055155,0,6000.055155,,,,2015-10-27 08:00,2015-11-03 16:00,,2015-06-01 08:00,2015-06-08 16:00,2015-06-01 08:00,2015-06-08 16:00,2015-06-01 08:00,2015-06-08 16:00,2015-10-27 08:00,2015-11-03 16:00,,PT_Normal,,,,,5PGf0lsgAkO4mQT/qneJIA,/QYXJO922k2BoyTV58uybQ,,,N,0,0,,,2014-04-05 12:27,2014-04-05 13:21,admin,admin,
1028,140771,1749,36513,642,0,N,N,N,CP_Drtn,TT_Task,DT_FixedDUR2,TK_NotStart,BL1-MEP-AC-5F-2000,Chilled Water Pipes and Fittings Installation,4457,984,0,168,0,840,840,168,5251.194852,0,5251.194852,,,,2015-10-02 08:00,2015-10-22 16:00,,2015-06-01 08:00,2015-06-21 16:00,2015-06-01 08:00,2015-06-21 16:00,2015-06-01 08:00,2015-06-21 16:00,2015-10-02 08:00,2015-10-22 16:00,,PT_Normal,,,,,DzpTUva4Uk+t/uhrfPn4Bg,c7c/r2FAr0KkXhJsA24WLA,,,N,0,0,,,2014-04-05 12:27,2014-04-05 13:21,admin,admin,
1029,140772,1749,36513,642,0,N,N,N,CP_Drtn,TT_Task,DT_FixedDUR2,TK_NotStart,BL1-MEP-AC-5F-2030,Chilled Water Pipes Pressure Test,4457,1032,0,48,0,96,96,48,587.116683,0,587.116683,,,,2015-10-29 08:00,2015-11-03 16:00,,2015-06-22 08:00,2015-06-27 16:00,2015-06-22 08:00,2015-06-27 16:00,2015-06-22 08:00,2015-06-27 16:00,2015-10-29 08:00,2015-11-03 16:00,,PT_Normal,,,,,fym2fvUQzkaKCYYC78al2g,mRibq7smN0icJrDxlhrBRA,,,N,0,0,,,2014-04-05 12:27,2014-04-05 13:21,admin,admin,
1030,140773,1749,36513,642,0,N,N,N,CP_Drtn,TT_Task,DT_FixedDUR2,TK_NotStart,BL1-MEP-AC-5F-2040,Chilled Water Pipes Insulation,4457,1536,72,96,0,384,384,96,1670.208495,0,1670.208495,,,,2016-01-06 08:00,2016-01-17 16:00,,2015-06-28 08:00,2015-07-09 16:00,2015-06-28 08:00,2015-07-09 16:00,2015-06-28 08:00,2015-07-09 16:00,2016-01-06 08:00,2016-01-17 16:00,,PT_Normal,,,,,AWkgV1IZWk6sDN5cdea5wA,eSrbr1Gd6kKk/FqkO5Bcow,,,N,0,0,,,2014-04-05 12:27,2014-04-05 13:21,admin,admin,
1031,140774,1749,36513,642,0,N,N,N,CP_Drtn,TT_Task,DT_FixedDUR2,TK_NotStart,BL1-MEP-AC-5F-2050,Valve Package Installation,4457,1032,0,48,0,96,96,48,2386.490429,0,2386.490429,,,,2015-11-04 08:00,2015-11-09 16:00,,2015-06-28 08:00,2015-07-03 16:00,2015-06-28 08:00,2015-07-03 16:00,2015-06-28 08:00,2015-07-03 16:00,2015-11-04 08:00,2015-11-09 16:00,,PT_Normal,,,,,lCh9nDfpX0WZOxNSACDH9Q,v0xaKVVUMUCOD68OkG5qLA,,,N,0,0,,,2014-04-05 12:27,2014-04-05 13:21,admin,admin,
1032,140775,1749,36513,642,0,N,N,N,CP_Drtn,TT_Task,DT_FixedDUR2,TK_NotStart,BL1-MEP-AC-5F-2060,FCU's Drain Pipes Installation,4457,1032,144,24,0,48,48,24,519.927167,0,519.927167,,,,2015-11-10 08:00,2015-11-12 16:00,,2015-07-04 08:00,2015-07-06 16:00,2015-07-04 08:00,2015-07-06 16:00,2015-07-04 08:00,2015-07-06 16:00,2015-11-10 08:00,2015-11-12 16:00,,PT_Normal,,,,,HcWxXOh7tEOhfSyg5GJeXw,aBtIK556NU6NNDBQxD6EyA,,,N,0,0,,,2014-04-05 12:27,2014-04-05 13:21,admin,admin,
1033,140776,1749,36514,642,0,N,N,N,CP_Drtn,TT_Task,DT_FixedDUR2,TK_NotStart,BL1-MEP-AC-5F-3000,Grills and Diffusers Fixing,,1392,0,96,0,384,384,96,11550.608192,0,11550.608192,,,,2016-01-24 08:00,2016-02-04 16:00,,2015-08-03 08:00,2015-08-14 16:00,2015-08-03 08:00,2015-08-14 16:00,2015-08-03 08:00,2015-08-14 16:00,2016-01-24 08:00,2016-02-04 16:00,,PT_Normal,,,,,QAIRHiN89UyQjkpXAEeIWg,eT/PS4WHeU20d4/fw1woJQ,,,N,0,0,,,2014-04-05 12:27,2014-04-05 13:21,admin,admin,
1034,140777,1749,36189,642,0,N,N,N,CP_Drtn,TT_Task,DT_FixedDUR2,TK_NotStart,BL1-MEP-EL-5F-3020,Lights Fitting Fixing,,1240,0,112,0,244,244,112,7336.659378,0,7336.659378,,,,2016-01-09 08:00,2016-01-22 16:00,,2015-08-07 08:00,2015-08-20 16:00,2015-08-07 08:00,2015-08-20 16:00,2015-08-07 08:00,2015-08-20 16:00,2016-01-09 08:00,2016-01-22 16:00,,PT_Normal,,,,,7t7zvbSjGUO0J37RSY9DLg,n2fW9VqcMEKfkCBYfeRGOA,,,N,0,0,,,2014-04-05 12:27,2014-04-05 13:21,admin,admin,
1035,140778,1749,36189,642,0,N,N,N,CP_Drtn,TT_Task,DT_FixedDUR2,TK_NotStart,BL1-MEP-EL-5F-3050,Sockets and Switches Fixing,,1416,16,64,0,128,128,64,1174.957134,0,1174.957134,,,,2016-01-27 08:00,2016-02-03 16:00,,2015-08-03 08:00,2015-08-10 16:00,2015-08-03 08:00,2015-08-10 16:00,2015-08-03 08:00,2015-08-10 16:00,2016-01-27 08:00,2016-02-03 16:00,,PT_Normal,,,,,VGx9xoDRA0yO5EIk9SfREA,hNDcGq9J1UO4n0QfZE9M8A,,,N,0,0,,,2014-04-05 12:27,2014-04-05 13:21,admin,admin,
1036,140779,1749,36189,642,0,N,N,N,CP_Drtn,TT_Task,DT_FixedDUR2,TK_NotStart,BL1-MEP-EL-5F-3000,Emergency Light Fixing,,1480,16,64,0,128,128,64,5722.024623,0,5722.024623,,,,2016-02-04 08:00,2016-02-11 16:00,,2015-08-03 08:00,2015-08-10 16:00,2015-08-03 08:00,2015-08-10 16:00,2015-08-03 08:00,2015-08-10 16:00,2016-02-04 08:00,2016-02-11 16:00,,PT_Normal,,,,,hU40FpnPwkeaYn5GSPWDuA,cUmHHK27pkuj79RuUpPvow,,,N,0,0,,,2014-04-05 12:27,2014-04-05 13:21,admin,admin,
1037,140780,1749,36189,642,0,N,N,N,CP_Drtn,TT_Task,DT_FixedDUR2,TK_NotStart,BL1-MEP-EL-5F-3010,Fire Alarm System Detector Installation,,1320,0,96,0,192,192,96,4046.378277,0,4046.378277,,,,2016-01-15 08:00,2016-01-26 16:00,,2015-08-03 08:00,2015-08-14 16:00,2015-08-03 08:00,2015-08-14 16:00,2015-08-03 08:00,2015-08-14 16:00,2016-01-15 08:00,2016-01-26 16:00,,PT_Normal,,,,,EYgucxvgZEuCHQdQkecsmA,4+qqpv8mL0aAWGGu7xWCRw,,,N,0,0,,,2014-04-05 12:27,2014-04-05 13:21,admin,admin,
1038,140781,1749,36189,642,0,N,N,N,CP_Drtn,TT_Task,DT_FixedDUR2,TK_NotStart,BL1-MEP-EL-5F-3070,SMDB's  Termination and Final Connection,,1376,32,48,0,192,192,48,2791.825001,0,2791.825001,,,,2016-01-22 08:00,2016-01-27 16:00,,2015-08-03 08:00,2015-08-08 16:00,2015-08-03 08:00,2015-08-08 16:00,2015-08-03 08:00,2015-08-08 16:00,2016-01-22 08:00,2016-01-27 16:00,,PT_Normal,,,,,U3ZfD+CM5kO2pEjGMPp0mg,WymwaA1WhEe7H6v7R+qSdw,,,N,0,0,,,2014-04-05 12:27,2014-04-05 13:21,admin,admin,
1039,140782,1749,36200,642,0,N,N,N,CP_Drtn,TT_Task,DT_FixedDUR2,TK_NotStart,BL1-MEP-EL-5F-3060,Power Cable Puling,,1304,0,112,0,168,168,112,6375.759893,0,6375.759893,,,,2015-12-08 08:00,2015-12-21 16:00,,2015-06-28 08:00,2015-07-11 16:00,2015-06-28 08:00,2015-07-11 16:00,2015-06-28 08:00,2015-07-11 16:00,2015-12-08 08:00,2015-12-21 16:00,,PT_Normal,,,,,2S/xpwoLxU64WTzyRhJMAg,TtVvnW6UA0qyHDdG94cQ3A,,,N,0,0,,,2014-04-05 12:27,2014-04-05 13:21,admin,admin,
1040,140783,1749,36189,642,0,N,N,N,CP_Drtn,TT_Task,DT_FixedDUR2,TK_NotStart,BL1-MEP-EL-5F-3030,Despature for Low Current  System Installation,4455,1304,0,112,0,336,336,112,72752.164276,0,72752.164276,,,,2016-01-13 08:00,2016-01-26 16:00,,2015-08-03 08:00,2015-08-16 16:00,2015-08-03 08:00,2015-08-16 16:00,2015-08-03 08:00,2015-08-16 16:00,2016-01-13 08:00,2016-01-26 16:00,,PT_Normal,,,,,08YKvTzIJUyUjyNnkfH1kA,RCQpGIMsuESmryMHb3CUXA,,,N,0,0,,,2014-04-05 12:27,2014-04-05 13:21,admin,admin,
1041,140784,1749,36189,642,0,N,N,N,CP_Drtn,TT_Task,DT_FixedDUR2,TK_NotStart,BL1-MEP-EL-5F-3040,Low Current  System Outlet installation and Connection,4455,1400,208,80,0,80,80,80,3870.787498,0,3870.787498,,,,2016-02-08 08:00,2016-02-17 16:00,,2015-08-17 08:00,2015-08-26 16:00,2015-08-17 08:00,2015-08-26 16:00,2015-08-17 08:00,2015-08-26 16:00,2016-02-08 08:00,2016-02-17 16:00,,PT_Normal,,,,,WsaE8gHMpUCZpI6h2YBA6w,ajOT50gxLkmutk/l7+J3Vw,,,N,0,0,,,2014-04-05 12:27,2014-04-05 13:21,admin,admin,
1042,140785,1749,36199,642,0,N,N,N,CP_Drtn,TT_Task,DT_FixedDUR2,TK_NotStart,BL1-MEP-EL-5F-1000,PVC Back Boxes and Conduits  Fixing in Wall,,768,0,96,0,384,384,96,3319.67233,0,3319.67233,,,,2015-07-28 08:00,2015-08-08 16:00,,2015-04-16 08:00,2015-04-29 16:00,2015-04-16 08:00,2015-04-29 16:00,2015-04-16 08:00,2015-04-29 16:00,2015-07-28 08:00,2015-08-08 16:00,,PT_Normal,,,,,+EomsSmDwU+zbHy6a4MePQ,RG70KUqm006qWouN1fHLzQ,,,N,0,0,,,2014-04-05 12:27,2014-04-05 13:21,admin,admin,
1043,140786,1749,36199,642,0,N,N,N,CP_Drtn,TT_Task,DT_FixedDUR2,TK_NotStart,BL1-MEP-EL-5F-1010,DB's Inclosure Fixing,4455,912,48,48,0,96,96,48,2136.399392,0,2136.399392,,,,2015-08-24 08:00,2015-08-29 16:00,,2015-04-27 08:00,2015-05-03 16:00,2015-04-27 08:00,2015-05-03 16:00,2015-04-27 08:00,2015-05-03 16:00,2015-08-24 08:00,2015-08-29 16:00,,PT_Normal,,,,,0fxvr0yqnUW2yMAqNjwxzA,q3n7aWnG1kGbpikWBVta7A,,,N,0,0,,,2014-04-05 12:27,2014-04-05 13:21,admin,admin,
1044,140787,1749,36200,642,0,N,N,N,CP_Drtn,TT_Task,DT_FixedDUR2,TK_NotStart,BL1-MEP-EL-5F-2050,SMDB's  Installation,,1712,32,48,0,45,45,48,4202.598932,0,4202.598932,,,,2016-01-16 08:00,2016-01-21 16:00,,2015-06-16 08:00,2015-06-21 16:00,2015-06-16 08:00,2015-06-21 16:00,2015-06-16 08:00,2015-06-21 16:00,2016-01-16 08:00,2016-01-21 16:00,,PT_Normal,,,,,8p3h96ULxEe4xb2OATVDHA,jw0i4s7efUSEpbzDsjgCzw,,,N,0,0,,,2014-04-05 12:27,2014-04-05 13:21,admin,admin,
1045,140788,1749,36200,642,0,N,N,N,CP_Drtn,TT_Task,DT_FixedDUR2,TK_NotStart,BL1-MEP-EL-5F-2030,Lighting  Wiring,,1224,0,96,0,241.713,241.713,96,3578.08423,0,3578.08423,,,,2015-11-01 08:00,2015-11-12 16:00,,2015-06-01 08:00,2015-06-12 16:00,2015-06-01 08:00,2015-06-12 16:00,2015-06-01 08:00,2015-06-12 16:00,2015-11-01 08:00,2015-11-12 16:00,,PT_Normal,,,,,MDRuRujfIEeVs2D050K4gQ,qKc6PZo2y0WMi+E9mH1/iQ,,,N,0,0,,,2014-04-05 12:27,2014-04-05 13:21,admin,admin,
1046,140789,1749,36200,642,0,N,N,N,CP_Drtn,TT_Task,DT_FixedDUR2,TK_NotStart,BL1-MEP-EL-5F-2040,Power Points Wiring,,1128,0,96,0,192,192,96,2906.213289,0,2906.213289,,,,2015-10-20 08:00,2015-10-31 16:00,,2015-06-01 08:00,2015-06-12 16:00,2015-06-01 08:00,2015-06-12 16:00,2015-06-01 08:00,2015-06-12 16:00,2015-10-20 08:00,2015-10-31 16:00,,PT_Normal,,,,,Sxyq3Uhs1EuZOskhQMekcA,CzDYsJ3aik6EzTmFoLm2HA,,,N,0,0,,,2014-04-05 12:27,2014-04-05 13:21,admin,admin,
1047,140790,1749,36200,642,0,N,N,N,CP_Drtn,TT_Task,DT_FixedDUR2,TK_NotStart,BL1-MEP-EL-5F-2000,Cable Tray and Trunking Installation,,1208,0,112,0,336,336,112,9078.448617,0,9078.448617,,,,2015-10-30 08:00,2015-11-12 16:00,,2015-06-01 08:00,2015-06-14 16:00,2015-06-01 08:00,2015-06-14 16:00,2015-06-01 08:00,2015-06-14 16:00,2015-10-30 08:00,2015-11-12 16:00,,PT_Normal,,,,,RcHt5nZb0U+0QYgFQkkJsQ,nMy6/jiUe0qdTbc+2hBb9A,,,N,0,0,,,2014-04-05 12:27,2014-04-05 13:21,admin,admin,
1048,140791,1749,36200,642,0,N,N,N,CP_Drtn,TT_Task,DT_FixedDUR2,TK_NotStart,BL1-MEP-EL-5F-2060,Emergency Light Wiring,,1256,16,64,0,128,128,64,1210.028798,0,1210.028798,,,,2015-11-05 08:00,2015-11-12 16:00,,2015-06-01 08:00,2015-06-08 16:00,2015-06-01 08:00,2015-06-08 16:00,2015-06-01 08:00,2015-06-08 16:00,2015-11-05 08:00,2015-11-12 16:00,,PT_Normal,,,,,5pCmc+9cuEaUFISHjmFsAQ,hRgevJJQKkePI+1uY75iTw,,,N,0,0,,,2014-04-05 12:27,2014-04-05 13:21,admin,admin,
1049,140792,1749,36200,642,0,N,N,N,CP_Drtn,TT_Task,DT_FixedDUR2,TK_NotStart,BL1-MEP-EL-5F-2010,Fire Alarm System Wiring,,1224,0,96,0,192,192,96,7123.009694,0,7123.009694,,,,2015-11-01 08:00,2015-11-12 16:00,,2015-06-01 08:00,2015-06-12 16:00,2015-06-01 08:00,2015-06-12 16:00,2015-06-01 08:00,2015-06-12 16:00,2015-11-01 08:00,2015-11-12 16:00,,PT_Normal,,,,,1jsgz5hXRUi6YZvGKC9jZw,Npuybz93fEm60QAJabwK/g,,,N,0,0,,,2014-04-05 12:27,2014-04-05 13:21,admin,admin,
1050,140793,1749,36200,642,0,N,N,N,CP_Drtn,TT_Task,DT_FixedDUR2,TK_NotStart,BL1-MEP-EL-5F-2070,DB's Installation and Termination,4455,1104,0,96,0,288,288,96,4982.925025,0,4982.925025,,,,2015-11-01 08:00,2015-11-12 16:00,,2015-06-16 08:00,2015-06-27 16:00,2015-06-16 08:00,2015-06-27 16:00,2015-06-16 08:00,2015-06-27 16:00,2015-11-01 08:00,2015-11-12 16:00,,PT_Normal,,,,,UTwocDfGcEOiB9vn6pVpow,mJGythPlCUyMMt6FH2qcsQ,,,N,0,0,,,2014-04-05 12:27,2014-04-05 13:21,admin,admin,
1051,140794,1749,36200,642,0,N,N,N,CP_Drtn,TT_Task,DT_FixedDUR2,TK_NotStart,BL1-MEP-EL-5F-2020,Low Current  System Wiring,4455,1696,392,112,0,244,244,112,38231.783306,0,38231.783306,,,,2015-12-30 08:00,2016-01-12 16:00,,2015-06-01 08:00,2015-06-14 16:00,2015-06-01 08:00,2015-06-14 16:00,2015-06-01 08:00,2015-06-14 16:00,2015-12-30 08:00,2016-01-12 16:00,,PT_Normal,,,,,41YtqloGvEy86IQPW9k76g,iR+zteGKNka9QXYFoWibag,,,N,0,0,,,2014-04-05 12:27,2014-04-05 13:21,admin,admin,
1052,140795,1749,36625,642,0,N,N,N,CP_Drtn,TT_Task,DT_FixedDUR2,TK_NotStart,BL1-MEP-FF-GF-3000,Fire Extinguisher Installation,,1712,0,16,0,8,8,16,1076.993507,0,1076.993507,,,,2016-02-03 08:00,2016-02-04 16:00,,2015-07-04 08:00,2015-07-05 16:00,2015-07-04 08:00,2015-07-05 16:00,2015-07-04 08:00,2015-07-05 16:00,2016-02-03 08:00,2016-02-04 16:00,,PT_Normal,,,,,siEZtJnDYk2ETbU5COWd+A,szOiMG8LsECDIdRBAu4xiA,,,N,0,0,,,2014-04-05 12:27,2014-04-05 13:21,admin,admin,
1053,140796,1749,36625,642,0,N,N,N,CP_Drtn,TT_Task,DT_FixedDUR2,TK_NotStart,BL1-MEP-FF-GF-3010,Hose reel Cabinet Installation and Connection,,484,0,48,0,192,192,48,1336.852298,0,1336.852298,,,,2015-09-01 12:00,2015-09-07 12:00,,2015-07-03 08:00,2015-07-08 16:00,2015-07-03 08:00,2015-07-08 16:00,2015-07-03 08:00,2015-07-08 16:00,2015-09-01 12:00,2015-09-07 12:00,,PT_Normal,,,,,g6zNFbbl5Uurk8JcI0x3PQ,lVgomjY8zU+wNh9EZ72c6Q,,,N,0,0,,,2014-04-05 12:27,2014-04-05 13:21,admin,admin,
1054,140797,1749,36627,642,0,N,N,N,CP_Drtn,TT_Task,DT_FixedDUR2,TK_NotStart,BL1-MEP-PL-GF-3000,Sanitary Ware Installation Including Connection,,740,0,112,0,383.862,383.862,112,4453.516455,0,4453.516455,,,,2015-08-18 12:00,2015-09-01 12:00,,2015-05-16 08:00,2015-05-31 16:00,2015-05-16 08:00,2015-05-31 16:00,2015-05-16 08:00,2015-05-31 16:00,2015-08-18 12:00,2015-09-01 12:00,,PT_Normal,,,,,FmScRtzGy0WqJPkMSW2iBg,b3Ah03VDtUarmVS/q0a8HQ,,,N,0,0,,,2014-04-05 12:27,2014-04-05 13:21,admin,admin,
1055,140798,1749,36627,642,0,N,N,N,CP_Drtn,TT_Task,DT_FixedDUR2,TK_NotStart,BL1-MEP-PL-GF-3010,Sanitary Ware Accessories Installation,,740,72,48,0,36.45,36.45,48,166.215378,0,166.215378,,,,2015-09-01 12:00,2015-09-07 12:00,,2015-06-01 08:00,2015-06-06 16:00,2015-06-01 08:00,2015-06-06 16:00,2015-06-01 08:00,2015-06-06 16:00,2015-09-01 12:00,2015-09-07 12:00,,PT_Normal,,,,,pXkYFeRjDk2cUazNPzR9ZQ,I0MFMXTxpkWYK6oIAyt81g,,,N,0,0,,,2014-04-05 12:27,2014-04-05 13:21,admin,admin,
1056,140799,1749,36628,642,0,N,N,N,CP_Drtn,TT_Task,DT_FixedDUR2,TK_NotStart,BL1-MEP-PL-GF-1000,Low Level Water Supply Pipes Installation,,812,0,96,0,42,42,96,725.216846,0,725.216846,,,,2015-04-07 12:00,2015-04-21 12:00,,2014-12-08 08:00,2014-12-21 16:00,2014-12-08 08:00,2014-12-21 16:00,2014-12-08 08:00,2014-12-21 16:00,2015-04-07 12:00,2015-04-21 12:00,,PT_Normal,,,,,B+z4Z/yig0yCkk6W6yhB+Q,k/3jY4cmM0KGrYOzmvUQTQ,,,N,0,0,,,2014-04-05 12:27,2014-04-05 13:21,admin,admin,
1057,140800,1749,36628,642,0,N,N,N,CP_Drtn,TT_Task,DT_FixedDUR2,TK_NotStart,BL1-MEP-PL-GF-1010,Low Level Drainage Pipes Installation,,812,0,96,0,12.67,12.67,96,94.429262,0,94.429262,,,,2015-04-07 12:00,2015-04-21 12:00,,2014-12-08 08:00,2014-12-21 16:00,2014-12-08 08:00,2014-12-21 16:00,2014-12-08 08:00,2014-12-21 16:00,2015-04-07 12:00,2015-04-21 12:00,,PT_Normal,,,,,1W1Bj2zV9EigtbC+SMS1tQ,KJ8ovFTzSUeY8qxfmE5DIw,,,N,0,0,,,2014-04-05 12:27,2014-04-05 13:21,admin,admin,
1058,140801,1749,36628,642,0,N,N,N,CP_Drtn,TT_Task,DT_FixedDUR2,TK_NotStart,BL1-MEP-PL-GF-1020,Supports  installation for High level Pipes,,1212,96,96,0,16.352,16.352,96,831.682549,0,831.682549,,,,2015-06-04 12:00,2015-06-16 12:00,,2014-12-08 08:00,2014-12-21 16:00,2014-12-08 08:00,2014-12-21 16:00,2014-12-08 08:00,2014-12-21 16:00,2015-06-04 12:00,2015-06-16 12:00,,PT_Normal,,,,,KwIt0TNNbUe/S7KxEC3wlg,O2ukthyvUE+/U0w3XjbI6A,,,N,0,0,,,2014-04-05 12:27,2014-04-05 13:21,admin,admin,
1059,140802,1749,36629,642,0,N,N,N,CP_Drtn,TT_Task,DT_FixedDUR2,TK_NotStart,BL1-MEP-PL-GF-2010,Floor Drain Installation,,812,0,48,0,6,6,48,554.143324,0,554.143324,,,,2015-07-01 12:00,2015-07-07 12:00,,2015-03-10 08:00,2015-03-16 16:00,2015-03-10 08:00,2015-03-16 16:00,2015-03-10 08:00,2015-03-16 16:00,2015-07-01 12:00,2015-07-07 12:00,,PT_Normal,,,,,WrCYMT1j+kW9Dj/N/ngyWw,NmLNlQ8tFkCbXNSMwKfZ3g,,,N,0,0,,,2014-04-05 12:27,2014-04-05 13:21,admin,admin,
1060,140803,1749,36629,642,0,N,N,N,CP_Drtn,TT_Task,DT_FixedDUR2,TK_NotStart,BL1-MEP-PL-GF-2020,High Level Water Supply Pipes and Fittings Installation,,1084,0,168,0,150.02,150.02,168,1329.597866,0,1329.597866,,,,2015-06-16 12:00,2015-07-07 12:00,,2015-01-12 08:00,2015-02-04 16:00,2015-01-12 08:00,2015-02-04 16:00,2015-01-12 08:00,2015-02-04 16:00,2015-06-16 12:00,2015-07-07 12:00,,PT_Normal,,,,,RZnrdMj+okehgP0OCulndg,f1rlxt/2ak6hMgrLhlYOPQ,,,N,0,0,,,2014-04-05 12:27,2014-04-05 13:21,admin,admin,
1061,140804,1749,36629,642,0,N,N,N,CP_Drtn,TT_Task,DT_FixedDUR2,TK_NotStart,BL1-MEP-PL-GF-2000,High Level Drainage Pipes Installation,,1092,24,168,0,244.38,244.38,168,6583.525267,0,6583.525267,,,,2015-06-16 12:00,2015-07-07 12:00,,2015-01-11 08:00,2015-02-03 16:00,2015-01-11 08:00,2015-02-03 16:00,2015-01-11 08:00,2015-02-03 16:00,2015-06-16 12:00,2015-07-07 12:00,,PT_Normal,,,,,UVCibhx1KEO6kogUj+dAsQ,bl4qd4QK5UuGIqhaZiuHtw,,,N,0,0,,,2014-04-05 12:27,2014-04-05 13:21,admin,admin,
1062,140805,1749,36629,642,0,N,N,N,CP_Drtn,TT_Task,DT_FixedDUR2,TK_NotStart,BL1-MEP-PL-GF-2040,Water Supply Pipes Pressure Test,4456,1084,136,48,0,48,48,48,151.744312,0,151.744312,,,,2015-07-07 12:00,2015-07-13 12:00,,2015-02-05 08:00,2015-02-11 16:00,2015-02-05 08:00,2015-02-11 16:00,2015-02-05 08:00,2015-02-11 16:00,2015-07-07 12:00,2015-07-13 12:00,,PT_Normal,,,,,rTodyiMD4kWGsS14EgoU3A,TQIEOceRTE2f/1Wiq1TpKg,,,N,0,0,,,2014-04-05 12:27,2014-04-05 13:21,admin,admin,
1063,140806,1749,36629,642,0,N,N,N,CP_Drtn,TT_Task,DT_FixedDUR2,TK_NotStart,BL1-MEP-PL-GF-2030,Drainage Pipes Gravity Test,,812,0,48,0,48,48,48,826.240719,0,826.240719,,,,2015-07-07 12:00,2015-07-13 12:00,,2015-03-17 08:00,2015-03-23 16:00,2015-03-17 08:00,2015-03-23 16:00,2015-03-17 08:00,2015-03-23 16:00,2015-07-07 12:00,2015-07-13 12:00,,PT_Normal,,,,,xfPMuNOuyE2Wjf91D+W7kA,QYYugaHc2EOrOrfblh7e5w,,,N,0,0,,,2014-04-05 12:27,2014-04-05 13:21,admin,admin,
1064,140807,1749,36631,642,0,N,N,N,CP_Drtn,TT_Task,DT_FixedDUR2,TK_NotStart,BL1-MEP-AC-GF-1000,Supports and Hungers Fixing,,1140,96,96,0,192,192,96,338.467259,0,338.467259,,,,2015-05-25 12:00,2015-06-07 12:00,,2014-12-08 08:00,2014-12-21 16:00,2014-12-08 08:00,2014-12-21 16:00,2014-12-08 08:00,2014-12-21 16:00,2015-05-25 12:00,2015-06-07 12:00,,PT_Normal,,,,,sUvjAa11b0yWD2PeaBHCNA,/fnNMQeuXUuXoF5JUf34bg,,,N,0,0,,,2014-04-05 12:27,2014-04-05 13:21,admin,admin,
1065,140808,1749,36632,642,0,N,N,N,CP_Drtn,TT_Task,DT_FixedDUR2,TK_NotStart,BL1-MEP-AC-GF-2010,Fresh Air Duct and Extract Duct Installation and Insulation,4454,916,0,168,0,1008,1008,168,5570.653981,0,5570.653981,,,,2015-06-08 12:00,2015-06-29 12:00,,2015-01-27 08:00,2015-02-19 16:00,2015-01-27 08:00,2015-02-19 16:00,2015-01-27 08:00,2015-02-19 16:00,2015-06-08 12:00,2015-06-29 12:00,,PT_Normal,,,,,MTiwhpJtRUCtyPJTZIQadw,L+y9v1O3hEOLc7jPGH7LYw,,,N,0,0,,,2014-04-05 12:27,2014-04-05 13:21,admin,admin,
1066,140809,1749,36632,642,0,N,N,N,CP_Drtn,TT_Task,DT_FixedDUR2,TK_NotStart,BL1-MEP-AC-GF-2040,Duct Accessories Installation,4457,916,56,112,0,448,448,112,666.965527,0,666.965527,,,,2015-06-29 12:00,2015-07-13 12:00,,2015-02-21 08:00,2015-03-08 16:00,2015-02-21 08:00,2015-03-08 16:00,2015-02-21 08:00,2015-03-08 16:00,2015-06-29 12:00,2015-07-13 12:00,,PT_Normal,,,,,X545dSP44Ea9AMTWgHfUVQ,LQPXTG8JgEyz8+AePzqnWw,,,N,0,0,,,2014-04-05 12:27,2014-04-05 13:21,admin,admin,
1067,140810,1749,36632,642,0,N,N,N,CP_Drtn,TT_Task,DT_FixedDUR2,TK_NotStart,BL1-MEP-AC-GF-2050,FCU's Installation,4457,916,0,64,0,192,192,64,6000.055155,0,6000.055155,,,,2015-06-26 12:00,2015-07-04 12:00,,2015-02-17 08:00,2015-02-25 16:00,2015-02-17 08:00,2015-02-25 16:00,2015-02-17 08:00,2015-02-25 16:00,2015-06-26 12:00,2015-07-04 12:00,,PT_Normal,,,,,JRMFt1B48EaT8lI9eWbZFg,ytwwC4EbZkWD3Lj3UWBJLw,,,N,0,0,,,2014-04-05 12:27,2014-04-05 13:21,admin,admin,
1068,140811,1749,36632,642,0,N,N,N,CP_Drtn,TT_Task,DT_FixedDUR2,TK_NotStart,BL1-MEP-AC-GF-2000,Chilled Water Pipes and Fittings Installation,4457,1020,0,168,0,840,840,168,5251.194852,0,5251.194852,,,,2015-06-07 12:00,2015-06-28 12:00,,2015-01-11 08:00,2015-02-03 16:00,2015-01-11 08:00,2015-02-03 16:00,2015-01-11 08:00,2015-02-03 16:00,2015-06-07 12:00,2015-06-28 12:00,,PT_Normal,,,,,FBp8k/5vKUim8xHkKvMiiA,60feQKxbC0e8pNAH55sziw,,,N,0,0,,,2014-04-05 12:27,2014-04-05 13:21,admin,admin,
1069,140812,1749,36632,642,0,N,N,N,CP_Drtn,TT_Task,DT_FixedDUR2,TK_NotStart,BL1-MEP-AC-GF-2020,Chilled Water Pipes Pressure Test,4457,1020,0,48,0,96,96,48,587.116683,0,587.116683,,,,2015-06-28 12:00,2015-07-04 12:00,,2015-02-04 08:00,2015-02-10 16:00,2015-02-04 08:00,2015-02-10 16:00,2015-02-04 08:00,2015-02-10 16:00,2015-06-28 12:00,2015-07-04 12:00,,PT_Normal,,,,,WIo56Rv5xUOmxTWKghKQyw,Teeiae9t60mZH44aG7CAaQ,,,N,0,0,,,2014-04-05 12:27,2014-04-05 13:21,admin,admin,
1070,140813,1749,36632,642,0,N,N,N,CP_Drtn,TT_Task,DT_FixedDUR2,TK_NotStart,BL1-MEP-AC-GF-2030,Chilled Water Pipes Insulation,4457,2024,96,96,0,384,384,96,1670.208495,0,1670.208495,,,,2015-11-07 08:00,2015-11-18 16:00,,2015-02-11 08:00,2015-02-24 16:00,2015-02-11 08:00,2015-02-24 16:00,2015-02-11 08:00,2015-02-24 16:00,2015-11-07 08:00,2015-11-18 16:00,,PT_Normal,,,,,Gl8wdnEz5Eao0DlJNo1GYQ,yVVNXNCY60GOIpu72Dm45Q,,,N,0,0,,,2014-04-05 12:27,2014-04-05 13:21,admin,admin,
1071,140814,1749,36632,642,0,N,N,N,CP_Drtn,TT_Task,DT_FixedDUR2,TK_NotStart,BL1-MEP-AC-GF-2060,Valve Package Installation,4457,916,0,48,0,96,96,48,2386.490429,0,2386.490429,,,,2015-07-04 12:00,2015-07-10 12:00,,2015-02-26 08:00,2015-03-04 16:00,2015-02-26 08:00,2015-03-04 16:00,2015-02-26 08:00,2015-03-04 16:00,2015-07-04 12:00,2015-07-10 12:00,,PT_Normal,,,,,qnpn1esA+kG64T48bGwtRw,tMu8W+ZZ0ESpxTqVV8B3ug,,,N,0,0,,,2014-04-05 12:27,2014-04-05 13:21,admin,admin,
1072,140815,1749,36632,642,0,N,N,N,CP_Drtn,TT_Task,DT_FixedDUR2,TK_NotStart,BL1-MEP-AC-GF-2070,FCU's Drain Pipes Installation,4457,916,64,24,0,48,48,24,519.927167,0,519.927167,,,,2015-07-10 12:00,2015-07-13 12:00,,2015-03-05 08:00,2015-03-08 16:00,2015-03-05 08:00,2015-03-08 16:00,2015-03-05 08:00,2015-03-08 16:00,2015-07-10 12:00,2015-07-13 12:00,,PT_Normal,,,,,tMWgrYj8y0Gvntm/7VnKng,dvo9Ip0ng0+jBxfN4fXsYQ,,,N,0,0,,,2014-04-05 12:27,2014-04-05 13:21,admin,admin,
1073,140816,1749,36633,642,0,N,N,N,CP_Drtn,TT_Task,DT_FixedDUR2,TK_NotStart,BL1-MEP-AC-GF-3000,Grills and Diffusers Fixing,,748,0,96,0,384,384,96,11550.608192,0,11550.608192,,,,2015-08-26 12:00,2015-09-07 12:00,,2015-05-24 08:00,2015-06-05 16:00,2015-05-24 08:00,2015-06-05 16:00,2015-05-24 08:00,2015-06-05 16:00,2015-08-26 12:00,2015-09-07 12:00,,PT_Normal,,,,,ieMy74+nKECVHfTzJFoF4w,03ejqFC71EyMyDu/E20CNA,,,N,0,0,,,2014-04-05 12:27,2014-04-05 13:21,admin,admin,
1074,140817,1749,36311,642,0,N,N,N,CP_Drtn,TT_Task,DT_FixedDUR2,TK_NotStart,BL1-MEP-EL-GF-1000,PVC Back Boxes and Conduits  Fixing in Wall,,1232,96,96,0,384,384,96,3319.67233,0,3319.67233,,,,2015-05-28 08:00,2015-06-09 16:00,,2014-11-27 08:00,2014-12-10 16:00,2014-11-27 08:00,2014-12-10 16:00,2014-11-27 08:00,2014-12-10 16:00,2015-05-28 08:00,2015-06-09 16:00,,PT_Normal,,,,,ycs1+/svck2gfuGbGAY6UA,4+INA3TYt0SpL1bQiiBbGA,,,N,0,0,,,2014-04-05 12:27,2014-04-05 13:21,admin,admin,
1075,140818,1749,36311,642,0,N,N,N,CP_Drtn,TT_Task,DT_FixedDUR2,TK_NotStart,BL1-MEP-EL-GF-1010,DB's Inclosure Fixing,4455,1280,144,48,0,96,96,48,2136.399392,0,2136.399392,,,,2015-06-13 08:00,2015-06-18 16:00,,2014-12-08 08:00,2014-12-14 16:00,2014-12-08 08:00,2014-12-14 16:00,2014-12-08 08:00,2014-12-14 16:00,2015-06-13 08:00,2015-06-18 16:00,,PT_Normal,,,,,Wm+5yvOuXUG/HtCHmlrFdQ,tAGwzoO0rEK57XHWMtGRNg,,,N,0,0,,,2014-04-05 12:27,2014-04-05 13:21,admin,admin,
1076,140819,1749,36227,642,0,N,N,N,CP_Drtn,TT_Task,DT_FixedDUR2,TK_NotStart,BL1-MEP-EL-GF-3000,Lights Fitting Fixing,,700,0,112,0,244,244,112,7336.659378,0,7336.659378,,,,2015-08-24 12:00,2015-09-07 12:00,,2015-05-28 08:00,2015-06-11 16:00,2015-05-28 08:00,2015-06-11 16:00,2015-05-28 08:00,2015-06-11 16:00,2015-08-24 12:00,2015-09-07 12:00,,PT_Normal,,,,,Cr1+WUPOLkOGftvINuMtZQ,1w/xBVPwBU2WW7bG2QTuzQ,,,N,0,0,,,2014-04-05 12:27,2014-04-05 13:21,admin,admin,
1077,140820,1749,36227,642,0,N,N,N,CP_Drtn,TT_Task,DT_FixedDUR2,TK_NotStart,BL1-MEP-EL-GF-3050,Sockets and Switches Fixing,,1052,0,64,0,128,128,64,1174.957134,0,1174.957134,,,,2015-08-30 12:00,2015-09-07 12:00,,2015-04-14 08:00,2015-04-22 16:00,2015-04-14 08:00,2015-04-22 16:00,2015-04-14 08:00,2015-04-22 16:00,2015-08-30 12:00,2015-09-07 12:00,,PT_Normal,,,,,F+1IGWGgI0q65YuuEzHC/g,9HMU1jH/Z0KIlBYVfisFQg,,,N,0,0,,,2014-04-05 12:27,2014-04-05 13:21,admin,admin,
1078,140821,1749,36227,642,0,N,N,N,CP_Drtn,TT_Task,DT_FixedDUR2,TK_NotStart,BL1-MEP-EL-GF-3010,Emergency Light Fixing,,1132,72,64,0,128,128,64,5722.024623,0,5722.024623,,,,2015-08-30 12:00,2015-09-07 12:00,,2015-04-02 08:00,2015-04-11 16:00,2015-04-02 08:00,2015-04-11 16:00,2015-04-02 08:00,2015-04-11 16:00,2015-08-30 12:00,2015-09-07 12:00,,PT_Normal,,,,,oPAJkWTJ6k67V3YN4VBKRA,Hh2nlonxH02XJBiH4t+W+g,,,N,0,0,,,2014-04-05 12:27,2014-04-05 13:21,admin,admin,
1079,140822,1749,36227,642,0,N,N,N,CP_Drtn,TT_Task,DT_FixedDUR2,TK_NotStart,BL1-MEP-EL-GF-3020,Fire Alarm System Detector Installation,,1068,8,96,0,192,192,96,4046.378277,0,4046.378277,,,,2015-08-26 12:00,2015-09-07 12:00,,2015-04-07 08:00,2015-04-20 16:00,2015-04-07 08:00,2015-04-20 16:00,2015-04-07 08:00,2015-04-20 16:00,2015-08-26 12:00,2015-09-07 12:00,,PT_Normal,,,,,T3vk6Dvo+E25wLgJpIoDuQ,JjKqO++iaUmKRGpBFxuhAg,,,N,0,0,,,2014-04-05 12:27,2014-04-05 13:21,admin,admin,
1080,140823,1749,36227,642,0,N,N,N,CP_Drtn,TT_Task,DT_FixedDUR2,TK_NotStart,BL1-MEP-EL-GF-3070,SMDB's  Termination and Final Connection,,1116,56,48,0,192,192,48,2791.825001,0,2791.825001,,,,2015-09-01 12:00,2015-09-07 12:00,,2015-04-07 08:00,2015-04-13 16:00,2015-04-07 08:00,2015-04-13 16:00,2015-04-07 08:00,2015-04-13 16:00,2015-09-01 12:00,2015-09-07 12:00,,PT_Normal,,,,,4evkLpcpGU6wxSykwJ8qvw,w59zA7mSV0Sj8irf+nYPxg,,,N,0,0,,,2014-04-05 12:27,2014-04-05 13:21,admin,admin,
1081,140824,1749,36309,642,0,N,N,N,CP_Drtn,TT_Task,DT_FixedDUR2,TK_NotStart,BL1-MEP-EL-GF-3060,Power Cable Puling,,1380,80,112,0,168,168,112,6375.759893,0,6375.759893,,,,2015-08-18 12:00,2015-09-01 12:00,,2015-02-11 08:00,2015-02-26 16:00,2015-02-11 08:00,2015-02-26 16:00,2015-02-11 08:00,2015-02-26 16:00,2015-08-18 12:00,2015-09-01 12:00,,PT_Normal,,,,,+VBDdcuqyU65AEse1SbKOw,Ef6YhBmxeUOY2Hu+LTagFQ,,,N,0,0,,,2014-04-05 12:27,2014-04-05 13:21,admin,admin,
1082,140825,1749,36227,642,0,N,N,N,CP_Drtn,TT_Task,DT_FixedDUR2,TK_NotStart,BL1-MEP-EL-GF-3030,Despature for Low Current  System Installation,4455,1020,8,112,0,336,336,112,72752.164276,0,72752.164276,,,,2015-08-14 12:00,2015-08-28 12:00,,2015-03-31 08:00,2015-04-15 16:00,2015-03-31 08:00,2015-04-15 16:00,2015-03-31 08:00,2015-04-15 16:00,2015-08-14 12:00,2015-08-28 12:00,,PT_Normal,,,,,VcfxV0/YN02fNuuCRYwQ0w,3O4fR4+29EC+K36msXAa7g,,,N,0,0,,,2014-04-05 12:27,2014-04-05 13:21,admin,admin,
1083,140826,1749,36227,642,0,N,N,N,CP_Drtn,TT_Task,DT_FixedDUR2,TK_NotStart,BL1-MEP-EL-GF-3040,Low Current  System Outlet installation and Connection,4455,1012,528,80,0,80,80,80,3870.787498,0,3870.787498,,,,2015-08-28 12:00,2015-09-07 12:00,,2015-04-18 08:00,2015-04-28 16:00,2015-04-18 08:00,2015-04-28 16:00,2015-04-18 08:00,2015-04-28 16:00,2015-08-28 12:00,2015-09-07 12:00,,PT_Normal,,,,,mhXpk2D3UECqUULpHOGj6Q,zNgCtBUbXkGKPiwNFGbqrQ,,,N,0,0,,,2014-04-05 12:27,2014-04-05 13:21,admin,admin,
1084,140827,1749,36309,642,0,N,N,N,CP_Drtn,TT_Task,DT_FixedDUR2,TK_NotStart,BL1-MEP-EL-GF-2030,SMDB's  Installation,,1212,0,48,0,45,45,48,4202.598932,0,4202.598932,,,,2015-08-26 12:00,2015-09-01 12:00,,2015-03-17 08:00,2015-03-23 16:00,2015-03-17 08:00,2015-03-23 16:00,2015-03-17 08:00,2015-03-23 16:00,2015-08-26 12:00,2015-09-01 12:00,,PT_Normal,,,,,asOYR0jNpE2zufYc0YfcTQ,XfZ9Giq6AUO8QKgFub/Vyw,,,N,0,0,,,2014-04-05 12:27,2014-04-05 13:21,admin,admin,
1085,140828,1749,36309,642,0,N,N,N,CP_Drtn,TT_Task,DT_FixedDUR2,TK_NotStart,BL1-MEP-EL-GF-2040,Lighting  Wiring,,1212,96,96,0,241.713,241.713,96,3578.08423,0,3578.08423,,,,2015-07-01 12:00,2015-07-13 12:00,,2015-01-11 08:00,2015-01-24 16:00,2015-01-11 08:00,2015-01-24 16:00,2015-01-11 08:00,2015-01-24 16:00,2015-07-01 12:00,2015-07-13 12:00,,PT_Normal,,,,,/dDiV3Q3uEW/2HteRwtI/w,WZ8LqREfz02heF/NNjVa0A,,,N,0,0,,,2014-04-05 12:27,2014-04-05 13:21,admin,admin,
1086,140829,1749,36309,642,0,N,N,N,CP_Drtn,TT_Task,DT_FixedDUR2,TK_NotStart,BL1-MEP-EL-GF-2050,Power Points Wiring,,1116,24,96,0,192,192,96,2906.213289,0,2906.213289,,,,2015-06-19 12:00,2015-07-01 12:00,,2015-01-11 08:00,2015-01-24 16:00,2015-01-11 08:00,2015-01-24 16:00,2015-01-11 08:00,2015-01-24 16:00,2015-06-19 12:00,2015-07-01 12:00,,PT_Normal,,,,,fiIazba14E+2Vm4zqhRFNQ,d/Z2DMxL8kuqiLLH+Fct8g,,,N,0,0,,,2014-04-05 12:27,2014-04-05 13:21,admin,admin,
1087,140830,1749,36309,642,0,N,N,N,CP_Drtn,TT_Task,DT_FixedDUR2,TK_NotStart,BL1-MEP-EL-GF-2010,Cable Tray and Trunking Installation,,1196,80,112,0,336,336,112,9078.448617,0,9078.448617,,,,2015-06-29 12:00,2015-07-13 12:00,,2015-01-11 08:00,2015-01-26 16:00,2015-01-11 08:00,2015-01-26 16:00,2015-01-11 08:00,2015-01-26 16:00,2015-06-29 12:00,2015-07-13 12:00,,PT_Normal,,,,,WL1+xWtFKEC6PY93SKzTiQ,X4MAwKyXMEu8spNkUYyJog,,,N,0,0,,,2014-04-05 12:27,2014-04-05 13:21,admin,admin,
1088,140831,1749,36309,642,0,N,N,N,CP_Drtn,TT_Task,DT_FixedDUR2,TK_NotStart,BL1-MEP-EL-GF-2070,Emergency Light Wiring,,1244,128,64,0,128,128,64,1210.028798,0,1210.028798,,,,2015-07-05 12:00,2015-07-13 12:00,,2015-01-11 08:00,2015-01-19 16:00,2015-01-11 08:00,2015-01-19 16:00,2015-01-11 08:00,2015-01-19 16:00,2015-07-05 12:00,2015-07-13 12:00,,PT_Normal,,,,,HANHhHPkR0G9RhQfhyIYyw,rA4fA2RWik6meIfEpXMjVg,,,N,0,0,,,2014-04-05 12:27,2014-04-05 13:21,admin,admin,
1089,140832,1749,36309,642,0,N,N,N,CP_Drtn,TT_Task,DT_FixedDUR2,TK_NotStart,BL1-MEP-EL-GF-2000,Fire Alarm System Wiring,,1212,96,96,0,192,192,96,7123.009694,0,7123.009694,,,,2015-07-01 12:00,2015-07-13 12:00,,2015-01-11 08:00,2015-01-24 16:00,2015-01-11 08:00,2015-01-24 16:00,2015-01-11 08:00,2015-01-24 16:00,2015-07-01 12:00,2015-07-13 12:00,,PT_Normal,,,,,uIkFWAsiLk6WJVMC+W1zFw,hSjcwNdN30GLPBmaAvDf3A,,,N,0,0,,,2014-04-05 12:27,2014-04-05 13:21,admin,admin,
1090,140833,1749,36309,642,0,N,N,N,CP_Drtn,TT_Task,DT_FixedDUR2,TK_NotStart,BL1-MEP-EL-GF-2080,DB's Installation and Termination,4455,1092,0,96,0,288,288,96,4982.925025,0,4982.925025,,,,2015-07-01 12:00,2015-07-13 12:00,,2015-01-28 08:00,2015-02-10 16:00,2015-01-28 08:00,2015-02-10 16:00,2015-01-28 08:00,2015-02-10 16:00,2015-07-01 12:00,2015-07-13 12:00,,PT_Normal,,,,,cw9ugZOuvEmMYFlqrsitJA,PtOCOUNBWECDkkELvS6rJw,,,N,0,0,,,2014-04-05 12:27,2014-04-05 13:21,admin,admin,
1091,140834,1749,36309,642,0,N,N,N,CP_Drtn,TT_Task,DT_FixedDUR2,TK_NotStart,BL1-MEP-EL-GF-2060,Low Current  System Wiring,4455,1180,368,112,0,244,244,112,38231.783306,0,38231.783306,,,,2015-06-29 12:00,2015-07-13 12:00,,2015-01-13 08:00,2015-01-28 16:00,2015-01-13 08:00,2015-01-28 16:00,2015-01-13 08:00,2015-01-28 16:00,2015-06-29 12:00,2015-07-13 12:00,,PT_Normal,,,,,y4m7OPSAhk2UHPpFxhlhOg,fL4adXnLek+Er8auxbASig,,,N,0,0,,,2014-04-05 12:27,2014-04-05 13:21,admin,admin,
1092,140835,1749,36557,642,0,N,N,N,CP_Drtn,TT_Task,DT_FixedDUR2,TK_NotStart,P4-MEP-AC-B2-1000,Supports and Hungers Fixing,,3328,240,96,0,192,192,96,17491.952596,0,17491.952596,,,,2015-12-03 08:00,2015-12-14 16:00,,2014-08-25 08:00,2014-09-07 16:00,2014-08-25 08:00,2014-09-07 16:00,2014-08-25 08:00,2014-09-07 16:00,2015-12-03 08:00,2015-12-14 16:00,,PT_Normal,,,,,FJcV0SPYlUu/jV9iVoA24A,ZgjiijvNn0mc/Z5kjltuQw,,,N,0,0,,,2014-04-05 12:27,2014-04-05 13:21,admin,admin,
1093,140836,1749,36558,642,0,N,N,N,CP_Drtn,TT_Task,DT_FixedDUR2,TK_NotStart,P4-MEP-AC-B2-2000,Fan's Installation,,2664,0,200,0,134.4,134.4,200,102681.422275,0,102681.422275,,,,2015-12-15 08:00,2016-01-08 16:00,,2014-12-22 08:00,2015-01-21 16:00,2014-12-22 08:00,2015-01-21 16:00,2014-12-22 08:00,2015-01-21 16:00,2015-12-15 08:00,2016-01-08 16:00,,PT_Normal,,,,,eI4pc97QxEWU3ZAyZJRUKA,wo01qsRyREa9daAusXbbyw,,,N,0,0,,,2014-04-05 12:27,2014-04-05 13:21,admin,admin,
1094,140837,1749,36450,642,0,N,N,N,CP_Drtn,TT_Task,DT_FixedDUR2,TK_NotStart,P4-MEP-AC-B2-3000,Grills and Diffusers Fixing,,2080,0,80,0,320,320,80,157329.53202,0,157329.53202,,,,2016-01-20 08:00,2016-01-29 16:00,,2015-04-30 08:00,2015-05-11 16:00,2015-04-30 08:00,2015-05-11 16:00,2015-04-30 08:00,2015-05-11 16:00,2016-01-20 08:00,2016-01-29 16:00,,PT_Normal,,,,,mXeUycnzYUCov96i1CARfQ,zpWd2lk+oEiMSv8xfBKIfw,,,N,0,0,,,2014-04-05 12:27,2014-04-05 13:21,admin,admin,
1095,140838,1749,36454,642,0,N,N,N,CP_Drtn,TT_Task,DT_FixedDUR2,TK_NotStart,P4-MEP-PL-B2-3000,Manhole Covers  Installation,,2080,0,48,0,37.5,37.5,48,494.574212,0,494.574212,,,,2016-01-24 08:00,2016-01-29 16:00,,2015-05-05 08:00,2015-05-11 16:00,2015-05-05 08:00,2015-05-11 16:00,2015-05-05 08:00,2015-05-11 16:00,2016-01-24 08:00,2016-01-29 16:00,,PT_Normal,,,,,GDPhSHj/zEuM5CD4Oyu10A,pz5fEL7/5E6HQFpfXmxg/g,,,N,0,0,,,2014-04-05 12:27,2014-04-05 13:21,admin,admin,
1096,140839,1749,36456,642,0,N,N,N,CP_Drtn,TT_Task,DT_FixedDUR2,TK_NotStart,P4-MEP-FF-B2-1000,Supports  and Hungers installation,,3320,240,96,0,16.352,16.352,96,47.857235,0,47.857235,,,,2015-12-02 08:00,2015-12-13 16:00,,2014-08-25 08:00,2014-09-07 16:00,2014-08-25 08:00,2014-09-07 16:00,2014-08-25 08:00,2014-09-07 16:00,2015-12-02 08:00,2015-12-13 16:00,,PT_Normal,,,,,+eS+XsPUnEO/Zcsius28vQ,jD0J16Oq3E2/EMCxCOs6mw,,,N,0,0,,,2014-04-05 12:27,2014-04-05 13:21,admin,admin,
1097,140840,1749,36458,642,0,N,N,N,CP_Drtn,TT_Task,DT_FixedDUR2,TK_NotStart,P4-MEP-FF-B2-3000,Sprinkler Head Installation,4456,2808,72,96,0,45,45,96,4534.332301,0,4534.332301,,,,2016-01-19 08:00,2016-01-30 16:00,,2015-01-13 08:00,2015-01-26 16:00,2015-01-13 08:00,2015-01-26 16:00,2015-01-13 08:00,2015-01-26 16:00,2016-01-19 08:00,2016-01-30 16:00,,PT_Normal,,,,,kK//TeXeM0WHDe1waqBKnQ,rbS5zEy0YEampeCq8/K1dQ,,,N,0,0,,,2014-04-05 12:27,2014-04-05 13:21,admin,admin,
1098,140841,1749,36468,642,0,N,N,N,CP_Drtn,TT_Task,DT_FixedDUR2,TK_NotStart,P4-MEP-AC-B1-1000,Supports and Hungers Fixing,,3192,528,96,0,192,192,96,17491.952596,0,17491.952596,,,,2015-12-28 08:00,2016-01-08 16:00,,2014-10-18 08:00,2014-11-02 16:00,2014-10-18 08:00,2014-11-02 16:00,2014-10-18 08:00,2014-11-02 16:00,2015-12-28 08:00,2016-01-08 16:00,,PT_Normal,,,,,3urToFhWBkaMAxo0X0j2AQ,Ni4ZXbc3Y0OfNNE7yQKFhQ,,,N,0,0,,,2014-04-05 12:27,2014-04-05 13:21,admin,admin,
1099,140842,1749,36469,642,0,N,N,N,CP_Drtn,TT_Task,DT_FixedDUR2,TK_NotStart,P4-MEP-AC-B1-2000,Fan's Installation,,2664,552,200,0,134.4,134.4,200,102681.422275,0,102681.422275,,,,2016-01-09 08:00,2016-02-02 16:00,,2015-01-22 08:00,2015-02-19 16:00,2015-01-22 08:00,2015-02-19 16:00,2015-01-22 08:00,2015-02-19 16:00,2016-01-09 08:00,2016-02-02 16:00,,PT_Normal,,,,,N8CZemb30kGxnrm2I0RIhw,nj/qErf45UCyyMx7tMHn0A,,,N,0,0,,,2014-04-05 12:27,2014-04-05 13:21,admin,admin,
1100,140843,1749,36470,642,0,N,N,N,CP_Drtn,TT_Task,DT_FixedDUR2,TK_NotStart,P4-MEP-AC-B1-3000,Grills and Diffusers Fixing,,2112,1464,80,0,320,320,80,157329.53202,0,157329.53202,,,,2016-02-03 08:00,2016-02-12 16:00,,2015-05-12 08:00,2015-05-23 16:00,2015-05-12 08:00,2015-05-23 16:00,2015-05-12 08:00,2015-05-23 16:00,2016-02-03 08:00,2016-02-12 16:00,,PT_Normal,,,,,6ajnqCHcv0Kv0M6YULpP0w,nFDdrcQI4kqx19/d5irBzA,,,N,0,0,,,2014-04-05 12:27,2014-04-05 13:21,admin,admin,
1101,140844,1749,36581,642,0,N,N,N,CP_Drtn,TT_Task,DT_FixedDUR2,TK_NotStart,P4-MEP-PL-B1-1000,Supports  installation for High level Pipes,,3088,0,96,0,16.352,16.352,96,831.682549,0,831.682549,,,,2015-12-15 08:00,2015-12-26 16:00,,2014-10-18 08:00,2014-11-02 16:00,2014-10-18 08:00,2014-11-02 16:00,2014-10-18 08:00,2014-11-02 16:00,2015-12-15 08:00,2015-12-26 16:00,,PT_Normal,,,,,HzLfKXu2iE61YURSt8mJrA,BkXyOqidGkasRF1mxMldgQ,,,N,0,0,,,2014-04-05 12:27,2014-04-05 13:21,admin,admin,
1102,140845,1749,36474,642,0,N,N,N,CP_Drtn,TT_Task,DT_FixedDUR2,TK_NotStart,P4-MEP-PL-B1-3000,Manhole Covers  Installation,,2080,1496,48,0,37.5,37.5,48,494.574212,0,494.574212,,,,2016-01-30 08:00,2016-02-04 16:00,,2015-05-12 08:00,2015-05-18 16:00,2015-05-12 08:00,2015-05-18 16:00,2015-05-12 08:00,2015-05-18 16:00,2016-01-30 08:00,2016-02-04 16:00,,PT_Normal,,,,,1NdEC1IKPEyPDMjRfh5mQA,mGgagkXlGkqzsQV64PkMUQ,,,N,0,0,,,2014-04-05 12:27,2014-04-05 13:21,admin,admin,
1103,140846,1749,36476,642,0,N,N,N,CP_Drtn,TT_Task,DT_FixedDUR2,TK_NotStart,P4-MEP-FF-B1-1000,Supports  and Hungers installation,,3152,416,96,0,288,288,96,47.857235,0,47.857235,,,,2015-12-23 08:00,2016-01-03 16:00,,2014-10-18 08:00,2014-11-02 16:00,2014-10-18 08:00,2014-11-02 16:00,2014-10-18 08:00,2014-11-02 16:00,2015-12-23 08:00,2016-01-03 16:00,,PT_Normal,,,,,jzZIDrICQEeHbwaKFYGZfg,dtcln+1zwkyGgYeuWPYXVA,,,N,0,0,,,2014-04-05 12:27,2014-04-05 13:21,admin,admin,
1104,140847,1749,36477,642,0,N,N,N,CP_Drtn,TT_Task,DT_FixedDUR2,TK_NotStart,P4-MEP-FF-B1-2000,Sprinkler Pipes and Fittings Installation,,2736,0,168,0,672,672,168,35377.329721,0,35377.329721,,,,2016-01-04 08:00,2016-01-24 16:00,,2015-01-06 08:00,2015-01-29 16:00,2015-01-06 08:00,2015-01-29 16:00,2015-01-06 08:00,2015-01-29 16:00,2016-01-04 08:00,2016-01-24 16:00,,PT_Normal,,,,,sul2J2bF/EOZXFjxyRSYQg,QTA+r/BCD0ainLLu9x1o3g,,,N,0,0,,,2014-04-05 12:27,2014-04-05 13:21,admin,admin,
1105,140848,1749,36477,642,0,N,N,N,CP_Drtn,TT_Task,DT_FixedDUR2,TK_NotStart,P4-MEP-FF-B1-2010,Sprinkler Pipes Pressure Test,4456,2736,0,48,0,96,96,48,1970.24054,0,1970.24054,,,,2016-01-25 08:00,2016-01-30 16:00,,2015-01-31 08:00,2015-02-05 16:00,2015-01-31 08:00,2015-02-05 16:00,2015-01-31 08:00,2015-02-05 16:00,2016-01-25 08:00,2016-01-30 16:00,,PT_Normal,,,,,dSOvnzBUVESmpIstenJRmw,5aqoIyCAGUm5GktSBtGMaA,,,N,0,0,,,2014-04-05 12:27,2014-04-05 13:21,admin,admin,
1106,140849,1749,36478,642,0,N,N,N,CP_Drtn,TT_Task,DT_FixedDUR2,TK_NotStart,P4-MEP-FF-B1-3000,Sprinkler Head Installation,4456,2736,2096,96,0,576,576,96,4534.332301,0,4534.332301,,,,2016-01-31 08:00,2016-02-11 16:00,,2015-02-07 08:00,2015-02-19 16:00,2015-02-07 08:00,2015-02-19 16:00,2015-02-07 08:00,2015-02-19 16:00,2016-01-31 08:00,2016-02-11 16:00,,PT_Normal,,,,,u+Xyh3EW40iicjjdRrPKQw,lxF3QKmXJEuTOIDh3diQDg,,,N,0,0,,,2014-04-05 12:27,2014-04-05 13:21,admin,admin,
1107,140850,1749,36273,642,0,N,N,N,CP_Drtn,TT_Task,DT_FixedDUR2,TK_NotStart,P4-MEP-EL-B1-1010,PVC Back Boxes and Conduits  Fixing in Wall,,2928,0,96,0,384,384,96,3319.67233,0,3319.67233,,,,2015-12-11 08:00,2015-12-22 16:00,,2014-11-09 08:00,2014-11-22 16:00,2014-11-09 08:00,2014-11-22 16:00,2014-11-09 08:00,2014-11-22 16:00,2015-12-11 08:00,2015-12-22 16:00,,PT_Normal,,,,,VYwSqYwIxE+i8Qz5pR3pQw,k++mXLRtekWapbLTY8RtZA,,,N,0,0,,,2014-04-05 12:27,2014-04-05 13:21,admin,admin,
1108,140851,1749,36273,642,0,N,N,N,CP_Drtn,TT_Task,DT_FixedDUR2,TK_NotStart,P4-MEP-EL-B1-1000,DB's Inclosure Fixing,4455,3088,0,48,0,96,96,48,2136.399392,0,2136.399392,,,,2016-01-12 08:00,2016-01-17 16:00,,2014-11-23 08:00,2014-11-29 16:00,2014-11-23 08:00,2014-11-29 16:00,2014-11-23 08:00,2014-11-29 16:00,2016-01-12 08:00,2016-01-17 16:00,,PT_Normal,,,,,WIyAkqk2AE2DHDFcgL8f0g,/qJWa5/6XkSr7xYu74rLHA,,,N,0,0,,,2014-04-05 12:27,2014-04-05 13:21,admin,admin,
1109,140852,1749,36493,642,0,N,N,N,CP_Drtn,TT_Task,DT_FixedDUR2,TK_NotStart,P5-MEP-AC-B1-1000,Supports and Hungers Fixing,,2488,0,96,0,192,192,96,17491.952596,0,17491.952596,,,,2015-12-28 08:00,2016-01-08 16:00,,2015-02-03 08:00,2015-02-16 16:00,2015-02-03 08:00,2015-02-16 16:00,2015-02-03 08:00,2015-02-16 16:00,2015-12-28 08:00,2016-01-08 16:00,,PT_Normal,,,,,7O9ZinmfLk2nEMMAraqJRA,6N35eljP8kuOUP3uJJXtug,,,N,0,0,,,2014-04-05 12:27,2014-04-05 13:21,admin,admin,
1110,140853,1749,36494,642,0,N,N,N,CP_Drtn,TT_Task,DT_FixedDUR2,TK_NotStart,P5-MEP-AC-B1-2000,Fan's Installation,,2488,376,200,0,134.4,134.4,200,102681.422275,0,102681.422275,,,,2016-01-09 08:00,2016-02-02 16:00,,2015-02-17 08:00,2015-03-17 16:00,2015-02-17 08:00,2015-03-17 16:00,2015-02-17 08:00,2015-03-17 16:00,2016-01-09 08:00,2016-02-02 16:00,,PT_Normal,,,,,bim7BgVyGUOE1XqDk5nZ1Q,M+/0O2CAK0mtTsLyj7ks7w,,,N,0,0,,,2014-04-05 12:27,2014-04-05 13:21,admin,admin,
1111,140854,1749,36495,642,0,N,N,N,CP_Drtn,TT_Task,DT_FixedDUR2,TK_NotStart,P5-MEP-AC-B1-3000,Grills and Diffusers Fixing,,2112,1464,80,0,320,320,80,157329.53202,0,157329.53202,,,,2016-02-03 08:00,2016-02-12 16:00,,2015-05-12 08:00,2015-05-23 16:00,2015-05-12 08:00,2015-05-23 16:00,2015-05-12 08:00,2015-05-23 16:00,2016-02-03 08:00,2016-02-12 16:00,,PT_Normal,,,,,zK2kQj0aN0iSfmlzwc9cVQ,jKk8kQ3DXUuKSEANtTbDOw,,,N,0,0,,,2014-04-05 12:27,2014-04-05 13:21,admin,admin,
1112,140855,1749,36497,642,0,N,N,N,CP_Drtn,TT_Task,DT_FixedDUR2,TK_NotStart,P5-MEP-PL-B1-1000,Supports  installation for High level Pipes,,2384,0,96,0,16.352,16.352,96,831.682549,0,831.682549,,,,2015-12-15 08:00,2015-12-26 16:00,,2015-02-03 08:00,2015-02-16 16:00,2015-02-03 08:00,2015-02-16 16:00,2015-02-03 08:00,2015-02-16 16:00,2015-12-15 08:00,2015-12-26 16:00,,PT_Normal,,,,,FRM+u0lInU2Vq/tAe1BXMQ,8rvFZ/O0g0KD5dVPLrXYRA,,,N,0,0,,,2014-04-05 12:27,2014-04-05 13:21,admin,admin,
1113,140856,1749,36499,642,0,N,N,N,CP_Drtn,TT_Task,DT_FixedDUR2,TK_NotStart,P5-MEP-PL-B1-3000,Manhole Covers  Installation,,2440,1856,48,0,37.5,37.5,48,494.574212,0,494.574212,,,,2016-01-30 08:00,2016-02-04 16:00,,2015-03-21 08:00,2015-03-26 16:00,2015-03-21 08:00,2015-03-26 16:00,2015-03-21 08:00,2015-03-26 16:00,2016-01-30 08:00,2016-02-04 16:00,,PT_Normal,,,,,OqUPoLN+M02VkvYoQGkPrg,c23Dsep5t0aXTS37FXY95Q,,,N,0,0,,,2014-04-05 12:27,2014-04-05 13:21,admin,admin,
1114,140857,1749,36501,642,0,N,N,N,CP_Drtn,TT_Task,DT_FixedDUR2,TK_NotStart,P5-MEP-FF-B1-1000,Supports  and Hungers installation,,2448,0,96,0,288,288,96,47.857235,0,47.857235,,,,2015-12-23 08:00,2016-01-03 16:00,,2015-02-03 08:00,2015-02-16 16:00,2015-02-03 08:00,2015-02-16 16:00,2015-02-03 08:00,2015-02-16 16:00,2015-12-23 08:00,2016-01-03 16:00,,PT_Normal,,,,,D+S8TkImkUa6NZ8XE4Npiw,AyPW0jHmIkuBfvbiYorFdQ,,,N,0,0,,,2014-04-05 12:27,2014-04-05 13:21,admin,admin,
1115,140858,1749,36502,642,0,N,N,N,CP_Drtn,TT_Task,DT_FixedDUR2,TK_NotStart,P5-MEP-FF-B1-2000,Sprinkler Pipes and Fittings Installation,,2448,0,168,0,672,672,168,35377.329721,0,35377.329721,,,,2016-01-04 08:00,2016-01-24 16:00,,2015-02-17 08:00,2015-03-12 16:00,2015-02-17 08:00,2015-03-12 16:00,2015-02-17 08:00,2015-03-12 16:00,2016-01-04 08:00,2016-01-24 16:00,,PT_Normal,,,,,GVwOXseHykmYEBCjvybl/g,KxxI8ltr20ag28DTcyk2zA,,,N,0,0,,,2014-04-05 12:27,2014-04-05 13:21,admin,admin,
1116,140859,1749,36502,642,0,N,N,N,CP_Drtn,TT_Task,DT_FixedDUR2,TK_NotStart,P5-MEP-FF-B1-2010,Sprinkler Pipes Pressure Test,4456,2448,0,48,0,96,96,48,1970.24054,0,1970.24054,,,,2016-01-25 08:00,2016-01-30 16:00,,2015-03-14 08:00,2015-03-19 16:00,2015-03-14 08:00,2015-03-19 16:00,2015-03-14 08:00,2015-03-19 16:00,2016-01-25 08:00,2016-01-30 16:00,,PT_Normal,,,,,2VMsvQTK9EiJvXYtCdgISg,M19EDNvnyUuPSllMGR95BA,,,N,0,0,,,2014-04-05 12:27,2014-04-05 13:21,admin,admin,
1117,140860,1749,36503,642,0,N,N,N,CP_Drtn,TT_Task,DT_FixedDUR2,TK_NotStart,P5-MEP-FF-B1-3000,Sprinkler Head Installation,4456,2448,1808,96,0,576,576,96,4534.332301,0,4534.332301,,,,2016-01-31 08:00,2016-02-11 16:00,,2015-03-21 08:00,2015-04-02 16:00,2015-03-21 08:00,2015-04-02 16:00,2015-03-21 08:00,2015-04-02 16:00,2016-01-31 08:00,2016-02-11 16:00,,PT_Normal,,,,,pTORNY83H0SOf+8lYwIvdQ,bc8sxmOGjU2Q8MIwhoRh1Q,,,N,0,0,,,2014-04-05 12:27,2014-04-05 13:21,admin,admin,
1118,140861,1749,36518,642,0,N,N,N,CP_Drtn,TT_Task,DT_FixedDUR2,TK_NotStart,P5-MEP-AC-B2-1000,Supports and Hungers Fixing,,2496,0,96,0,192,192,96,17491.952596,0,17491.952596,,,,2015-12-03 08:00,2015-12-14 16:00,,2015-01-04 08:00,2015-01-17 16:00,2015-01-04 08:00,2015-01-17 16:00,2015-01-04 08:00,2015-01-17 16:00,2015-12-03 08:00,2015-12-14 16:00,,PT_Normal,,,,,Th6ifmoytESjFPIQpAAd1Q,/WaLOjj8z0uS12I2w908ww,,,N,0,0,,,2014-04-05 12:27,2014-04-05 13:21,admin,admin,
1119,140862,1749,36519,642,0,N,N,N,CP_Drtn,TT_Task,DT_FixedDUR2,TK_NotStart,P5-MEP-AC-B2-2000,Fan's Installation,,2496,8,200,0,134.4,134.4,200,102681.422275,0,102681.422275,,,,2015-12-15 08:00,2016-01-08 16:00,,2015-01-18 08:00,2015-02-15 16:00,2015-01-18 08:00,2015-02-15 16:00,2015-01-18 08:00,2015-02-15 16:00,2015-12-15 08:00,2016-01-08 16:00,,PT_Normal,,,,,B6zbc+iVY0mJZwdAsrNwGw,owsP9Sqj1EGosW8GCrUmVQ,,,N,0,0,,,2014-04-05 12:27,2014-04-05 13:21,admin,admin,
1120,140863,1749,36520,642,0,N,N,N,CP_Drtn,TT_Task,DT_FixedDUR2,TK_NotStart,P5-MEP-AC-B2-3000,Grills and Diffusers Fixing,,2112,0,80,0,320,320,80,157329.53202,0,157329.53202,,,,2016-01-24 08:00,2016-02-02 16:00,,2015-04-30 08:00,2015-05-11 16:00,2015-04-30 08:00,2015-05-11 16:00,2015-04-30 08:00,2015-05-11 16:00,2016-01-24 08:00,2016-02-02 16:00,,PT_Normal,,,,,ltVgGzYlbEard4GQVS4ewA,Am2Lq96Eb06UqPQRUaE51Q,,,N,0,0,,,2014-04-05 12:27,2014-04-05 13:21,admin,admin,
1121,140864,1749,36522,642,0,N,N,N,CP_Drtn,TT_Task,DT_FixedDUR2,TK_NotStart,P5-MEP-PL-B2-1000,Supports  installation for High level Pipes,,2552,0,96,0,16.352,16.352,96,831.682549,0,831.682549,,,,2015-11-24 08:00,2015-12-05 16:00,,2014-12-14 08:00,2014-12-27 16:00,2014-12-14 08:00,2014-12-27 16:00,2014-12-14 08:00,2014-12-27 16:00,2015-11-24 08:00,2015-12-05 16:00,,PT_Normal,,,,,nxx9XPR+fU+3WXjG8azxYg,mdDqi21TsEStORTKSRvHtQ,,,N,0,0,,,2014-04-05 12:27,2014-04-05 13:21,admin,admin,
1122,140865,1749,36524,642,0,N,N,N,CP_Drtn,TT_Task,DT_FixedDUR2,TK_NotStart,P5-MEP-PL-B2-3000,Manhole Covers  Installation,,2728,288,48,0,37.5,37.5,48,494.574212,0,494.574212,,,,2016-01-24 08:00,2016-01-29 16:00,,2015-01-31 08:00,2015-02-05 16:00,2015-01-31 08:00,2015-02-05 16:00,2015-01-31 08:00,2015-02-05 16:00,2016-01-24 08:00,2016-01-29 16:00,,PT_Normal,,,,,UiTyg7m74Eqy4CANmx7/IQ,QHAoSVLRbU2IMjOdwL08/w,,,N,0,0,,,2014-04-05 12:27,2014-04-05 13:21,admin,admin,
1123,140866,1749,36635,642,0,N,N,N,CP_Drtn,TT_Task,DT_FixedDUR2,TK_NotStart,P5-MEP-FF-B2-1000,Supports  and Hungers installation,,2616,0,96,0,288,288,96,47.857235,0,47.857235,,,,2015-12-02 08:00,2015-12-13 16:00,,2014-12-14 08:00,2014-12-27 16:00,2014-12-14 08:00,2014-12-27 16:00,2014-12-14 08:00,2014-12-27 16:00,2015-12-02 08:00,2015-12-13 16:00,,PT_Normal,,,,,kli5nE1U60yAj3NncmY7/g,h9q47nXKSE6POWaR+ZQrXg,,,N,0,0,,,2014-04-05 12:27,2014-04-05 13:21,admin,admin,
1124,140867,1749,36527,642,0,N,N,N,CP_Drtn,TT_Task,DT_FixedDUR2,TK_NotStart,P5-MEP-FF-B2-2000,Sprinkler Pipes and Fittings Installation,,2616,0,168,0,672,672,168,35377.329721,0,35377.329721,,,,2015-12-14 08:00,2016-01-03 16:00,,2014-12-28 08:00,2015-01-22 16:00,2014-12-28 08:00,2015-01-22 16:00,2014-12-28 08:00,2015-01-22 16:00,2015-12-14 08:00,2016-01-03 16:00,,PT_Normal,,,,,wPfbUnZKwkKxrSiRXUMl4Q,IsZ7X/F510msYdzeBF2Alw,,,N,0,0,,,2014-04-05 12:27,2014-04-05 13:21,admin,admin,
1125,140868,1749,36527,642,0,N,N,N,CP_Drtn,TT_Task,DT_FixedDUR2,TK_NotStart,P5-MEP-FF-B2-2010,Sprinkler Pipes Pressure Test,,2688,0,48,0,96,96,48,1970.24054,0,1970.24054,,,,2016-01-13 08:00,2016-01-18 16:00,,2015-01-24 08:00,2015-01-29 16:00,2015-01-24 08:00,2015-01-29 16:00,2015-01-24 08:00,2015-01-29 16:00,2016-01-13 08:00,2016-01-18 16:00,,PT_Normal,,,,,0qrzyWix7kCLFFDndI5IoA,Iq4GdWVDWEKuHH5vbjMgLw,,,N,0,0,,,2014-04-05 12:27,2014-04-05 13:21,admin,admin,
1126,140869,1749,36528,642,0,N,N,N,CP_Drtn,TT_Task,DT_FixedDUR2,TK_NotStart,P5-MEP-FF-B2-3000,Sprinkler Head Installation,4456,2688,240,96,0,576,576,96,4534.332301,0,4534.332301,,,,2016-01-19 08:00,2016-01-30 16:00,,2015-01-31 08:00,2015-02-12 16:00,2015-01-31 08:00,2015-02-12 16:00,2015-01-31 08:00,2015-02-12 16:00,2016-01-19 08:00,2016-01-30 16:00,,PT_Normal,,,,,EfrE3cDJYUyuvZ39WyksDw,CVtOd4dBNECAbpjRx4d2Jg,,,N,0,0,,,2014-04-05 12:27,2014-04-05 13:21,admin,admin,
1127,140870,1749,36543,642,0,N,N,N,CP_Drtn,TT_Task,DT_FixedDUR2,TK_NotStart,P7-MEP-FF-B2-1000,Supports  and Hungers installation,,1208,0,96,0,288,288,96,47.857235,0,47.857235,,,,2015-12-02 08:00,2015-12-13 16:00,,2015-07-04 08:00,2015-07-15 16:00,2015-07-04 08:00,2015-07-15 16:00,2015-07-04 08:00,2015-07-15 16:00,2015-12-02 08:00,2015-12-13 16:00,,PT_Normal,,,,,YVA1PCl/lEKNSnhETB/4TA,Kyqquj+fREqwpEUMV9id5A,,,N,0,0,,,2014-04-05 12:27,2014-04-05 13:21,admin,admin,
1128,140871,1749,36544,642,0,N,N,N,CP_Drtn,TT_Task,DT_FixedDUR2,TK_NotStart,P7-MEP-FF-B2-2000,Sprinkler Pipes and Fittings Installation,,1208,0,168,0,672,672,168,35377.329721,0,35377.329721,,,,2015-12-14 08:00,2016-01-03 16:00,,2015-07-16 08:00,2015-08-05 16:00,2015-07-16 08:00,2015-08-05 16:00,2015-07-16 08:00,2015-08-05 16:00,2015-12-14 08:00,2016-01-03 16:00,,PT_Normal,,,,,p/W87CNUKUGUfw9sq4TRgQ,QbkQRuDpN0604Gbp56OROA,,,N,0,0,,,2014-04-05 12:27,2014-04-05 13:21,admin,admin,
1129,140872,1749,36544,642,0,N,N,N,CP_Drtn,TT_Task,DT_FixedDUR2,TK_NotStart,P7-MEP-FF-B2-2010,Sprinkler Pipes Pressure Test,,1280,0,48,0,96,96,48,1970.24054,0,1970.24054,,,,2016-01-13 08:00,2016-01-18 16:00,,2015-08-06 08:00,2015-08-11 16:00,2015-08-06 08:00,2015-08-11 16:00,2015-08-06 08:00,2015-08-11 16:00,2016-01-13 08:00,2016-01-18 16:00,,PT_Normal,,,,,oAk0/ngd+UC2Ffbz7JDBMw,NRQakB8H7UWPJInCrTVfaw,,,N,0,0,,,2014-04-05 12:27,2014-04-05 13:21,admin,admin,
1130,140873,1749,36545,642,0,N,N,N,CP_Drtn,TT_Task,DT_FixedDUR2,TK_NotStart,P7-MEP-FF-B2-3000,Sprinkler Head Installation,4456,1280,240,96,0,576,576,96,4534.332301,0,4534.332301,,,,2016-01-19 08:00,2016-01-30 16:00,,2015-08-12 08:00,2015-08-23 16:00,2015-08-12 08:00,2015-08-23 16:00,2015-08-12 08:00,2015-08-23 16:00,2016-01-19 08:00,2016-01-30 16:00,,PT_Normal,,,,,2Tcesntin0+z4fD9RzlHDw,3ThOFYEOVE6FXIz6jCWm6A,,,N,0,0,,,2014-04-05 12:27,2014-04-05 13:21,admin,admin,
1131,140874,1749,36547,642,0,N,N,N,CP_Drtn,TT_Task,DT_FixedDUR2,TK_NotStart,P7-MEP-AC-B2-1000,Supports and Hungers Fixing,,1376,0,96,0,192,192,96,17491.952596,0,17491.952596,,,,2015-12-23 08:00,2016-01-03 16:00,,2015-07-04 08:00,2015-07-15 16:00,2015-07-04 08:00,2015-07-15 16:00,2015-07-04 08:00,2015-07-15 16:00,2015-12-23 08:00,2016-01-03 16:00,,PT_Normal,,,,,BTaofR498EST/qPY5Iv3Yw,UScmhHyUpk+/KY0BcaeN6g,,,N,0,0,,,2014-04-05 12:27,2014-04-05 13:21,admin,admin,
1132,140875,1749,36548,642,0,N,N,N,CP_Drtn,TT_Task,DT_FixedDUR2,TK_NotStart,P7-MEP-AC-B2-2000,Fan's Installation,,1376,0,120,0,134.4,134.4,120,102671.422275,0,102671.422275,,,,2016-01-04 08:00,2016-01-18 16:00,,2015-07-16 08:00,2015-07-30 16:00,2015-07-16 08:00,2015-07-30 16:00,2015-07-16 08:00,2015-07-30 16:00,2016-01-04 08:00,2016-01-18 16:00,,PT_Normal,,,,,Or2N89Y8XkCoGgyI9ZdqTw,4zDR1z7vvkG67PNcige6vQ,,,N,0,0,,,2014-04-05 12:27,2014-04-05 13:21,admin,admin,
1133,140876,1749,36549,642,0,N,N,N,CP_Drtn,TT_Task,DT_FixedDUR2,TK_NotStart,P7-MEP-AC-B2-3000,Grills and Diffusers Fixing,,1416,256,80,0,320,320,80,157329.53202,0,157329.53202,,,,2016-01-24 08:00,2016-02-02 16:00,,2015-07-31 08:00,2015-08-09 16:00,2015-07-31 08:00,2015-08-09 16:00,2015-07-31 08:00,2015-08-09 16:00,2016-01-24 08:00,2016-02-02 16:00,,PT_Normal,,,,,bLkcov2eNEGtylMc1jRSnw,1bXOac3ezEOgTsQBxI0G1Q,,,N,0,0,,,2014-04-05 12:27,2014-04-05 13:21,admin,admin,
1134,140877,1749,36551,642,0,N,N,N,CP_Drtn,TT_Task,DT_FixedDUR2,TK_NotStart,P7-MEP-PL-B2-1000,Supports  installation for High level Pipes,,1144,0,96,0,16.352,16.352,96,831.682549,0,831.682549,,,,2015-11-24 08:00,2015-12-05 16:00,,2015-07-04 08:00,2015-07-15 16:00,2015-07-04 08:00,2015-07-15 16:00,2015-07-04 08:00,2015-07-15 16:00,2015-11-24 08:00,2015-12-05 16:00,,PT_Normal,,,,,f8cL0CDCx0ShwsAYT0VhTw,1E96wKrL6U2zQOF4T4W2QA,,,N,0,0,,,2014-04-05 12:27,2014-04-05 13:21,admin,admin,
1135,140878,1749,36553,642,0,N,N,N,CP_Drtn,TT_Task,DT_FixedDUR2,TK_NotStart,P7-MEP-PL-B2-3000,Manhole Covers  Installation,,1320,288,48,0,37.5,37.5,48,494.574212,0,494.574212,,,,2016-01-24 08:00,2016-01-29 16:00,,2015-08-12 08:00,2015-08-17 16:00,2015-08-12 08:00,2015-08-17 16:00,2015-08-12 08:00,2015-08-17 16:00,2016-01-24 08:00,2016-01-29 16:00,,PT_Normal,,,,,TI0h2RY5n02JJeCNGMEh0Q,Kanj5tNnu0GnW/WiNnWLzA,,,N,0,0,,,2014-04-05 12:27,2014-04-05 13:21,admin,admin,
1136,140879,1749,36564,642,0,N,N,N,CP_Drtn,TT_Task,DT_FixedDUR2,TK_NotStart,P7-MEP-FF-B1-1000,Supports  and Hungers installation,,1040,0,96,0,288,288,96,47.857235,0,47.857235,,,,2015-12-23 08:00,2016-01-03 16:00,,2015-08-15 08:00,2015-08-26 16:00,2015-08-15 08:00,2015-08-26 16:00,2015-08-15 08:00,2015-08-26 16:00,2015-12-23 08:00,2016-01-03 16:00,,PT_Normal,,,,,Sc2CkyvKpkKP1psADtkHFQ,gkyd5iKegEq1PQIPj2kFHQ,,,N,0,0,,,2014-04-05 12:27,2014-04-05 13:21,admin,admin,
1137,140880,1749,36565,642,0,N,N,N,CP_Drtn,TT_Task,DT_FixedDUR2,TK_NotStart,P7-MEP-FF-B1-2000,Sprinkler Pipes and Fittings Installation,,1040,0,168,0,672,672,168,35377.329721,0,35377.329721,,,,2016-01-04 08:00,2016-01-24 16:00,,2015-08-27 08:00,2015-09-16 16:00,2015-08-27 08:00,2015-09-16 16:00,2015-08-27 08:00,2015-09-16 16:00,2016-01-04 08:00,2016-01-24 16:00,,PT_Normal,,,,,icSWDXeiQU2n6YeOwO84BQ,T3EcgkKUlU+K12zSCPtBfA,,,N,0,0,,,2014-04-05 12:27,2014-04-05 13:21,admin,admin,
1138,140881,1749,36565,642,0,N,N,N,CP_Drtn,TT_Task,DT_FixedDUR2,TK_NotStart,P7-MEP-FF-B1-2010,Sprinkler Pipes Pressure Test,4456,1040,0,48,0,96,96,48,1970.24054,0,1970.24054,,,,2016-01-25 08:00,2016-01-30 16:00,,2015-09-17 08:00,2015-09-22 16:00,2015-09-17 08:00,2015-09-22 16:00,2015-09-17 08:00,2015-09-22 16:00,2016-01-25 08:00,2016-01-30 16:00,,PT_Normal,,,,,8nLLFz0K6Uqdv66VJoU1YQ,h7HcaEMXrUa4JIv59okugA,,,N,0,0,,,2014-04-05 12:27,2014-04-05 13:21,admin,admin,
1139,140882,1749,36566,642,0,N,N,N,CP_Drtn,TT_Task,DT_FixedDUR2,TK_NotStart,P7-MEP-FF-B1-3000,Sprinkler Head Installation,4456,1040,400,96,0,576,576,96,4534.332301,0,4534.332301,,,,2016-01-31 08:00,2016-02-11 16:00,,2015-09-23 08:00,2015-10-04 16:00,2015-09-23 08:00,2015-10-04 16:00,2015-09-23 08:00,2015-10-04 16:00,2016-01-31 08:00,2016-02-11 16:00,,PT_Normal,,,,,WX4nn5gBP0y8j3GpWIhHpQ,yEBn4c56a0yin3TbKVjQ9w,,,N,0,0,,,2014-04-05 12:27,2014-04-05 13:21,admin,admin,
1140,140883,1749,36568,642,0,N,N,N,CP_Drtn,TT_Task,DT_FixedDUR2,TK_NotStart,P7-MEP-PL-B1-1000,Supports  installation for High level Pipes,,976,0,96,0,16.352,16.352,96,831.682549,0,831.682549,,,,2015-12-15 08:00,2015-12-26 16:00,,2015-08-15 08:00,2015-08-26 16:00,2015-08-15 08:00,2015-08-26 16:00,2015-08-15 08:00,2015-08-26 16:00,2015-12-15 08:00,2015-12-26 16:00,,PT_Normal,,,,,ts6rNFh4Ck+RYy2hk4CR9w,hKtot/FzrUW9x5hItHhiFw,,,N,0,0,,,2014-04-05 12:27,2014-04-05 13:21,admin,admin,
1141,140884,1749,36570,642,0,N,N,N,CP_Drtn,TT_Task,DT_FixedDUR2,TK_NotStart,P7-MEP-PL-B1-3000,Manhole Covers  Installation,,1032,448,48,0,37.5,37.5,48,494.574212,0,494.574212,,,,2016-01-30 08:00,2016-02-04 16:00,,2015-09-23 08:00,2015-09-28 16:00,2015-09-23 08:00,2015-09-28 16:00,2015-09-23 08:00,2015-09-28 16:00,2016-01-30 08:00,2016-02-04 16:00,,PT_Normal,,,,,11WpJ/URoUauA+sAJGQUMQ,gPYiyDN9uUKwDEjc8dW/gQ,,,N,0,0,,,2014-04-05 12:27,2014-04-05 13:21,admin,admin,
1142,140885,1749,36572,642,0,N,N,N,CP_Drtn,TT_Task,DT_FixedDUR2,TK_NotStart,P7-MEP-AC-B1-1000,Supports and Hungers Fixing,,1160,0,96,0,192,192,96,17491.952596,0,17491.952596,,,,2016-01-07 08:00,2016-01-18 16:00,,2015-08-15 08:00,2015-08-26 16:00,2015-08-15 08:00,2015-08-26 16:00,2015-08-15 08:00,2015-08-26 16:00,2016-01-07 08:00,2016-01-18 16:00,,PT_Normal,,,,,6Z0ZxvALIEu36uiAhaHQQw,1p6ovvr0rEShkiC3SGNMdQ,,,N,0,0,,,2014-04-05 12:27,2014-04-05 13:21,admin,admin,
1143,140886,1749,36573,642,0,N,N,N,CP_Drtn,TT_Task,DT_FixedDUR2,TK_NotStart,P7-MEP-AC-B1-2000,Fan's Installation,,1160,0,120,0,134.4,134.4,120,102671.422275,0,102671.422275,,,,2016-01-19 08:00,2016-02-02 16:00,,2015-08-27 08:00,2015-09-10 16:00,2015-08-27 08:00,2015-09-10 16:00,2015-08-27 08:00,2015-09-10 16:00,2016-01-19 08:00,2016-02-02 16:00,,PT_Normal,,,,,9+erOQ72NEG7YthkCZFOww,3jAFZmjBWEaJVhlfEhurHw,,,N,0,0,,,2014-04-05 12:27,2014-04-05 13:21,admin,admin,
1144,140887,1749,36574,642,0,N,N,N,CP_Drtn,TT_Task,DT_FixedDUR2,TK_NotStart,P7-MEP-AC-B1-3000,Grills and Diffusers Fixing,,1160,512,80,0,320,320,80,157329.53202,0,157329.53202,,,,2016-02-03 08:00,2016-02-12 16:00,,2015-09-11 08:00,2015-09-20 16:00,2015-09-11 08:00,2015-09-20 16:00,2015-09-11 08:00,2015-09-20 16:00,2016-02-03 08:00,2016-02-12 16:00,,PT_Normal,,,,,lZuaHwsdqkK36qwjkh4c3A,gWqNXeJ290yw8/sxW42iRQ,,,N,0,0,,,2014-04-05 12:27,2014-04-05 13:21,admin,admin,
1145,140888,1749,36588,642,0,N,N,N,CP_Drtn,TT_Task,DT_FixedDUR2,TK_NotStart,P6-MEP-PL-B2-1000,Supports  installation for High level Pipes,,1848,0,96,0,16.352,16.352,96,831.682549,0,831.682549,,,,2015-11-24 08:00,2015-12-05 16:00,,2015-03-29 08:00,2015-04-11 16:00,2015-03-29 08:00,2015-04-11 16:00,2015-03-29 08:00,2015-04-11 16:00,2015-11-24 08:00,2015-12-05 16:00,,PT_Normal,,,,,2a0l0H1pUk6nsPMVCXNxkw,ISa6V/kV70a1bpgWWbAJLQ,,,N,0,0,,,2014-04-05 12:27,2014-04-05 13:21,admin,admin,
1146,140889,1749,36590,642,0,N,N,N,CP_Drtn,TT_Task,DT_FixedDUR2,TK_NotStart,P6-MEP-PL-B2-3000,Manhole Covers  Installation,,2024,288,48,0,37.5,37.5,48,494.574212,0,494.574212,,,,2016-01-24 08:00,2016-01-29 16:00,,2015-05-13 08:00,2015-05-19 16:00,2015-05-13 08:00,2015-05-19 16:00,2015-05-13 08:00,2015-05-19 16:00,2016-01-24 08:00,2016-01-29 16:00,,PT_Normal,,,,,XbChgX180Uupx3jRjbVO/Q,DuJBq2Kq30i89wBbUsBsrg,,,N,0,0,,,2014-04-05 12:27,2014-04-05 13:21,admin,admin,
1147,140890,1749,36592,642,0,N,N,N,CP_Drtn,TT_Task,DT_FixedDUR2,TK_NotStart,P6-MEP-FF-B2-1000,Supports  and Hungers installation,,1912,0,96,0,288,288,96,47.857235,0,47.857235,,,,2015-12-02 08:00,2015-12-13 16:00,,2015-03-29 08:00,2015-04-11 16:00,2015-03-29 08:00,2015-04-11 16:00,2015-03-29 08:00,2015-04-11 16:00,2015-12-02 08:00,2015-12-13 16:00,,PT_Normal,,,,,xCxHU28rmEayZOF4Jz8CKA,Bp6j4/6pL0C2Sr2VblaUXA,,,N,0,0,,,2014-04-05 12:27,2014-04-05 13:21,admin,admin,
1148,140891,1749,36593,642,0,N,N,N,CP_Drtn,TT_Task,DT_FixedDUR2,TK_NotStart,P6-MEP-FF-B2-2000,Sprinkler Pipes and Fittings Installation,,1912,0,168,0,672,672,168,35377.329721,0,35377.329721,,,,2015-12-14 08:00,2016-01-03 16:00,,2015-04-12 08:00,2015-05-05 16:00,2015-04-12 08:00,2015-05-05 16:00,2015-04-12 08:00,2015-05-05 16:00,2015-12-14 08:00,2016-01-03 16:00,,PT_Normal,,,,,XkTqtgFAjUeE2GL0q+ua9Q,RRNUlYDU2kWiJ4JW65KPOQ,,,N,0,0,,,2014-04-05 12:27,2014-04-05 13:21,admin,admin,
1149,140892,1749,36593,642,0,N,N,N,CP_Drtn,TT_Task,DT_FixedDUR2,TK_NotStart,P6-MEP-FF-B2-2010,Sprinkler Pipes Pressure Test,,1984,0,48,0,96,96,48,1970.24054,0,1970.24054,,,,2016-01-13 08:00,2016-01-18 16:00,,2015-05-06 08:00,2015-05-12 16:00,2015-05-06 08:00,2015-05-12 16:00,2015-05-06 08:00,2015-05-12 16:00,2016-01-13 08:00,2016-01-18 16:00,,PT_Normal,,,,,thYsxe9olk2v96KnBN8DgA,eOl2veD6VECK6b3WZhhe7A,,,N,0,0,,,2014-04-05 12:27,2014-04-05 13:21,admin,admin,
1150,140893,1749,36594,642,0,N,N,N,CP_Drtn,TT_Task,DT_FixedDUR2,TK_NotStart,P6-MEP-FF-B2-3000,Sprinkler Head Installation,4456,1984,240,96,0,576,576,96,4534.332301,0,4534.332301,,,,2016-01-19 08:00,2016-01-30 16:00,,2015-05-13 08:00,2015-05-26 16:00,2015-05-13 08:00,2015-05-26 16:00,2015-05-13 08:00,2015-05-26 16:00,2016-01-19 08:00,2016-01-30 16:00,,PT_Normal,,,,,KXoQoHgex0OVSPUD9Fe6BA,YMurAmOwQkuBfjtGO3DZOw,,,N,0,0,,,2014-04-05 12:27,2014-04-05 13:21,admin,admin,
1151,140894,1749,36596,642,0,N,N,N,CP_Drtn,TT_Task,DT_FixedDUR2,TK_NotStart,P6-MEP-AC-B2-1000,Supports and Hungers Fixing,,2080,0,96,0,192,192,96,17491.952596,0,17491.952596,,,,2015-12-23 08:00,2016-01-03 16:00,,2015-03-29 08:00,2015-04-11 16:00,2015-03-29 08:00,2015-04-11 16:00,2015-03-29 08:00,2015-04-11 16:00,2015-12-23 08:00,2016-01-03 16:00,,PT_Normal,,,,,Es15bArPEkaSvDIhI6AaEg,FjnuHa8xDEaqCv2E67VufA,,,N,0,0,,,2014-04-05 12:27,2014-04-05 13:21,admin,admin,
1152,140895,1749,36597,642,0,N,N,N,CP_Drtn,TT_Task,DT_FixedDUR2,TK_NotStart,P6-MEP-AC-B2-2000,Fan's Installation,,2080,8,120,0,134.4,134.4,120,102671.422275,0,102671.422275,,,,2016-01-04 08:00,2016-01-18 16:00,,2015-04-12 08:00,2015-04-28 16:00,2015-04-12 08:00,2015-04-28 16:00,2015-04-12 08:00,2015-04-28 16:00,2016-01-04 08:00,2016-01-18 16:00,,PT_Normal,,,,,PxYSEzH89kiESMe4hbsYGg,jw8o4r0Lx0W55WEYXw4+UA,,,N,0,0,,,2014-04-05 12:27,2014-04-05 13:21,admin,admin,
1153,140896,1749,36598,642,0,N,N,N,CP_Drtn,TT_Task,DT_FixedDUR2,TK_NotStart,P6-MEP-AC-B2-3000,Grills and Diffusers Fixing,,2112,248,80,0,320,320,80,157329.53202,0,157329.53202,,,,2016-01-24 08:00,2016-02-02 16:00,,2015-04-30 08:00,2015-05-11 16:00,2015-04-30 08:00,2015-05-11 16:00,2015-04-30 08:00,2015-05-11 16:00,2016-01-24 08:00,2016-02-02 16:00,,PT_Normal,,,,,1XcwfTwTG0qNy3WSbjx23A,A6jhrFVrQkac7z8PSzZokA,,,N,0,0,,,2014-04-05 12:27,2014-04-05 13:21,admin,admin,
1154,140897,1749,36613,642,0,N,N,N,CP_Drtn,TT_Task,DT_FixedDUR2,TK_NotStart,P6-MEP-AC-B1-1000,Supports and Hungers Fixing,,1864,0,96,0,192,192,96,17491.952596,0,17491.952596,,,,2016-01-07 08:00,2016-01-18 16:00,,2015-05-17 08:00,2015-05-30 16:00,2015-05-17 08:00,2015-05-30 16:00,2015-05-17 08:00,2015-05-30 16:00,2016-01-07 08:00,2016-01-18 16:00,,PT_Normal,,,,,YpHGu8I3V0yWXRgIJd/f/w,8Lj2eT5qx06SN//G5rHYjQ,,,N,0,0,,,2014-04-05 12:27,2014-04-05 13:21,admin,admin,
1155,140898,1749,36614,642,0,N,N,N,CP_Drtn,TT_Task,DT_FixedDUR2,TK_NotStart,P6-MEP-AC-B1-2000,Fan's Installation,,1864,0,120,0,134.4,134.4,120,102671.422275,0,102671.422275,,,,2016-01-19 08:00,2016-02-02 16:00,,2015-05-31 08:00,2015-06-14 16:00,2015-05-31 08:00,2015-06-14 16:00,2015-05-31 08:00,2015-06-14 16:00,2016-01-19 08:00,2016-02-02 16:00,,PT_Normal,,,,,JvlJL57JtU6gyBm9M6YagA,ww2TpBIxnk6C2cUz3M6Ixg,,,N,0,0,,,2014-04-05 12:27,2014-04-05 13:21,admin,admin,
1156,140899,1749,36615,642,0,N,N,N,CP_Drtn,TT_Task,DT_FixedDUR2,TK_NotStart,P6-MEP-AC-B1-3000,Grills and Diffusers Fixing,,1864,1216,80,0,320,320,80,157329.53202,0,157329.53202,,,,2016-02-03 08:00,2016-02-12 16:00,,2015-06-15 08:00,2015-06-24 16:00,2015-06-15 08:00,2015-06-24 16:00,2015-06-15 08:00,2015-06-24 16:00,2016-02-03 08:00,2016-02-12 16:00,,PT_Normal,,,,,c0QboS6dY0+O8AVg232ayw,63WEN7gUq0qmpxzJ6/3Yaw,,,N,0,0,,,2014-04-05 12:27,2014-04-05 13:21,admin,admin,
1157,140900,1749,36617,642,0,N,N,N,CP_Drtn,TT_Task,DT_FixedDUR2,TK_NotStart,P6-MEP-PL-B1-1000,Supports  installation for High level Pipes,,1680,0,96,0,16.352,16.352,96,831.682549,0,831.682549,,,,2015-12-15 08:00,2015-12-26 16:00,,2015-05-17 08:00,2015-05-30 16:00,2015-05-17 08:00,2015-05-30 16:00,2015-05-17 08:00,2015-05-30 16:00,2015-12-15 08:00,2015-12-26 16:00,,PT_Normal,,,,,bq+pUn+xS0CpKSacwXeQYQ,ELjszOMCAUuH4XQRMb5KOQ,,,N,0,0,,,2014-04-05 12:27,2014-04-05 13:21,admin,admin,
1158,140901,1749,36619,642,0,N,N,N,CP_Drtn,TT_Task,DT_FixedDUR2,TK_NotStart,P6-MEP-PL-B1-3000,Manhole Covers  Installation,,1736,1152,48,0,37.5,37.5,48,494.574212,0,494.574212,,,,2016-01-30 08:00,2016-02-04 16:00,,2015-06-27 08:00,2015-07-02 16:00,2015-06-27 08:00,2015-07-02 16:00,2015-06-27 08:00,2015-07-02 16:00,2016-01-30 08:00,2016-02-04 16:00,,PT_Normal,,,,,WPCN2gfLVEu5iTtirYqdog,itgMQ9jy1UypdTpMCZuM5A,,,N,0,0,,,2014-04-05 12:27,2014-04-05 13:21,admin,admin,
1159,140902,1749,36621,642,0,N,N,N,CP_Drtn,TT_Task,DT_FixedDUR2,TK_NotStart,P6-MEP-FF-B1-1000,Supports  and Hungers installation,,1744,0,96,0,288,288,96,47.857235,0,47.857235,,,,2015-12-23 08:00,2016-01-03 16:00,,2015-05-17 08:00,2015-05-30 16:00,2015-05-17 08:00,2015-05-30 16:00,2015-05-17 08:00,2015-05-30 16:00,2015-12-23 08:00,2016-01-03 16:00,,PT_Normal,,,,,Fml26qRCTEO3qFawmnUXrA,68r0heiu20OdWskWw/UVYw,,,N,0,0,,,2014-04-05 12:27,2014-04-05 13:21,admin,admin,
1160,140903,1749,36622,642,0,N,N,N,CP_Drtn,TT_Task,DT_FixedDUR2,TK_NotStart,P6-MEP-FF-B1-2000,Sprinkler Pipes and Fittings Installation,,1744,0,168,0,672,672,168,35377.329721,0,35377.329721,,,,2016-01-04 08:00,2016-01-24 16:00,,2015-05-31 08:00,2015-06-20 16:00,2015-05-31 08:00,2015-06-20 16:00,2015-05-31 08:00,2015-06-20 16:00,2016-01-04 08:00,2016-01-24 16:00,,PT_Normal,,,,,KE9SB0GkskeSTzIL9JM/RA,rMLFbigoFk2Jaa/5YOahAA,,,N,0,0,,,2014-04-05 12:27,2014-04-05 13:21,admin,admin,
1161,140904,1749,36622,642,0,N,N,N,CP_Drtn,TT_Task,DT_FixedDUR2,TK_NotStart,P6-MEP-FF-B1-2010,Sprinkler Pipes Pressure Test,4456,1744,0,48,0,96,96,48,1970.24054,0,1970.24054,,,,2016-01-25 08:00,2016-01-30 16:00,,2015-06-21 08:00,2015-06-26 16:00,2015-06-21 08:00,2015-06-26 16:00,2015-06-21 08:00,2015-06-26 16:00,2016-01-25 08:00,2016-01-30 16:00,,PT_Normal,,,,,KtMO/eQ7nkS/hdk2LWnsjQ,aLcn0Sk+GkaR0ng2UEJgug,,,N,0,0,,,2014-04-05 12:27,2014-04-05 13:21,admin,admin,
1162,140905,1749,36623,642,0,N,N,N,CP_Drtn,TT_Task,DT_FixedDUR2,TK_NotStart,P6-MEP-FF-B1-3000,Sprinkler Head Installation,4456,1744,1104,96,0,576,576,96,4534.332301,0,4534.332301,,,,2016-01-31 08:00,2016-02-11 16:00,,2015-06-27 08:00,2015-07-08 16:00,2015-06-27 08:00,2015-07-08 16:00,2015-06-27 08:00,2015-07-08 16:00,2016-01-31 08:00,2016-02-11 16:00,,PT_Normal,,,,,fMTKIOtc4EmQQn4+JAug7A,M4RdyMbCt066H8JPUMhUew,,,N,0,0,,,2014-04-05 12:27,2014-04-05 13:21,admin,admin,
1163,140906,1749,35517,1447,0,N,N,N,CP_Drtn,TT_Task,DT_FixedDUR2,TK_NotStart,GEN1010,Preliminaries,,0,0,6320,0,0,0,6320,8582971,0,8582971,,,,2014-02-01 08:00,2016-03-31 16:00,,2014-02-01 08:00,2016-03-31 16:00,2014-02-01 08:00,2016-03-31 16:00,2014-02-01 08:00,2016-03-31 16:00,2014-02-01 08:00,2016-03-31 16:00,,PT_Normal,,,,,smL0Il1PdE2xot2oT5ZprA,,,,Y,0,0,,,2014-04-05 12:27,2014-04-05 13:21,admin,admin,
1164,140907,1749,35517,642,0,N,N,N,CP_Drtn,TT_Mile,DT_FixedDrtn,TK_NotStart,GEN1000,Commencement Date,,0,0,0,0,0,0,0,0,0,0,,,,2014-02-01 08:00,2014-02-01 08:00,,2014-02-01 08:00,2014-02-01 08:00,2014-02-01 08:00,2014-02-01 08:00,2014-02-01 08:00,2014-02-01 08:00,2014-02-01 08:00,2014-02-01 08:00,,PT_Normal,,,,,BmghjR0ig0OrVAciFAKXcA,,,,Y,0,0,,,2014-04-05 12:27,2014-04-05 12:27,admin,admin,
1165,140908,1749,35517,642,0,N,N,N,CP_Drtn,TT_FinMile,DT_FixedDrtn,TK_NotStart,GEN1100,Finish Date,,0,0,0,0,0,0,0,0,0,0,,,,2016-03-31 16:00,2016-03-31 16:00,,2016-03-31 16:00,2016-03-31 16:00,2016-03-31 16:00,2016-03-31 16:00,2016-03-31 16:00,2016-03-31 16:00,2016-03-31 16:00,2016-03-31 16:00,,PT_Normal,,,,,NPOMm/y2P0iBkg0Zuaygsw,,,,Y,0,0,,,2014-04-05 12:27,2014-04-05 12:27,admin,admin,
1166,140909,1749,35802,642,0,N,N,N,CP_Drtn,TT_Task,DT_FixedDUR2,TK_NotStart,ENG-DS-SUB-POD1000,Basement 2 Doors Schedule,,1948,0,80,0,0,0,80,10,0,10,,,,2015-05-31 12:00,2015-06-10 12:00,,2014-08-10 08:00,2014-08-20 16:00,2014-08-10 08:00,2014-08-20 16:00,2014-08-10 08:00,2014-08-20 16:00,2015-05-31 12:00,2015-06-10 12:00,,PT_Normal,,,,,SZvkkPssmEuRfWPiSpIIMQ,iUiM7u5jJ0OsS2T29HVn2w,,,N,0,0,,,2014-04-05 12:27,2014-04-05 13:21,admin,admin,
1167,140910,1749,35802,642,0,N,N,N,CP_Drtn,TT_Task,DT_FixedDUR2,TK_NotStart,ENG-DS-SUB-POD1010,Basement 1 Doors Schedule,,1948,0,80,0,0,0,80,10,0,10,,,,2015-06-10 12:00,2015-06-20 12:00,,2014-08-21 08:00,2014-09-01 16:00,2014-08-21 08:00,2014-09-01 16:00,2014-08-21 08:00,2014-09-01 16:00,2015-06-10 12:00,2015-06-20 12:00,,PT_Normal,,,,,iYqXQk47VUOSkcDntKq/nQ,i7WjYP0MV0u2GM9i4CiMJg,,,N,0,0,,,2014-04-05 12:27,2014-04-05 13:21,admin,admin,
1168,140911,1749,35803,642,0,N,N,N,CP_Drtn,TT_Task,DT_FixedDUR2,TK_NotStart,ENG-DS-APP-POD1000,Basement 2 Doors Schedule,,2028,1016,112,0,0,0,112,14,0,14,,,,2015-06-20 12:00,2015-07-04 12:00,,2014-08-21 08:00,2014-09-06 16:00,2014-08-21 08:00,2014-09-06 16:00,2014-08-21 08:00,2014-09-06 16:00,2015-06-20 12:00,2015-07-04 12:00,,PT_Normal,,,,,yG1sI8wxZUOPy1hxDGZ80w,iUiM7u5jJ0OsS2T29HVn2w,,,N,0,0,,,2014-04-05 12:27,2014-04-05 13:21,admin,admin,
1169,140912,1749,35803,642,0,N,N,N,CP_Drtn,TT_Task,DT_FixedDUR2,TK_NotStart,ENG-DS-APP-POD1010,Basement 1 Doors Schedule,,1948,936,112,0,0,0,112,14,0,14,,,,2015-06-20 12:00,2015-07-04 12:00,,2014-09-02 08:00,2014-09-17 16:00,2014-09-02 08:00,2014-09-17 16:00,2014-09-02 08:00,2014-09-17 16:00,2015-06-20 12:00,2015-07-04 12:00,,PT_Normal,,,,,l03HB81u50a3m7H4f+hgug,i7WjYP0MV0u2GM9i4CiMJg,,,N,0,0,,,2014-04-05 12:27,2014-04-05 13:21,admin,admin,
1170,140913,1749,35908,642,0,N,N,N,CP_Drtn,TT_Task,DT_FixedDUR2,TK_NotStart,ENG-BW-SUB-POD1000,Basement 2 BW,,1304,0,80,0,0,0,80,10,0,10,,,,2014-09-30 08:00,2014-10-15 16:00,,2014-03-08 08:00,2014-03-18 16:00,2014-03-08 08:00,2014-03-18 16:00,2014-03-08 08:00,2014-03-18 16:00,2014-09-30 08:00,2014-10-15 16:00,,PT_Normal,,,,,SlNCDH92hUqz6pmFeeQPQg,,,,N,0,0,,,2014-04-05 12:27,2014-04-05 13:21,admin,admin,
1171,140914,1749,35908,642,0,N,N,N,CP_Drtn,TT_Task,DT_FixedDUR2,TK_NotStart,ENG-BW-SUB-POD1010,Basement 1 BW,,1612,0,80,0,0,0,80,10,0,10,,,,2014-12-03 12:00,2014-12-15 12:00,,2014-03-19 08:00,2014-03-30 16:00,2014-03-19 08:00,2014-03-30 16:00,2014-03-19 08:00,2014-03-30 16:00,2014-12-03 12:00,2014-12-15 12:00,,PT_Normal,,,,,JmfO8LB4ekOC5IBu1/qnPQ,,,,N,0,0,,,2014-04-05 12:27,2014-04-05 13:21,admin,admin,
1172,140915,1749,35910,642,0,N,N,N,CP_Drtn,TT_Task,DT_FixedDUR2,TK_NotStart,ENG-BW-APP-POD1000,Basement 2 BW,,1304,0,112,0,0,0,112,14,0,14,,,,2014-10-16 08:00,2014-11-04 16:00,,2014-03-19 08:00,2014-04-03 16:00,2014-03-19 08:00,2014-04-03 16:00,2014-03-19 08:00,2014-04-03 16:00,2014-10-16 08:00,2014-11-04 16:00,,PT_Normal,,,,,OSEX/qTn0U6Jd++Tnl087Q,iUiM7u5jJ0OsS2T29HVn2w,,,N,0,0,,,2014-04-05 12:27,2014-04-05 13:21,admin,admin,
1173,140916,1749,35910,642,0,N,N,N,CP_Drtn,TT_Task,DT_FixedDUR2,TK_NotStart,ENG-BW-APP-POD1010,Basement 1 BW,,1772,744,112,0,0,0,112,14,0,14,,,,2015-01-10 12:00,2015-01-26 12:00,,2014-03-31 08:00,2014-04-15 16:00,2014-03-31 08:00,2014-04-15 16:00,2014-03-31 08:00,2014-04-15 16:00,2015-01-10 12:00,2015-01-26 12:00,,PT_Normal,,,,,BrVd2xpKF0iyUtCSwwHTTA,i7WjYP0MV0u2GM9i4CiMJg,,,N,0,0,,,2014-04-05 12:27,2014-04-05 13:21,admin,admin,
1174,140917,1749,35830,642,0,N,N,N,CP_Drtn,TT_Task,DT_FixedDUR2,TK_NotStart,ENG-WA-SUB-POD1000,Basement 2 Wet Areas,,1612,0,80,0,0,0,80,10,0,10,,,,2014-12-15 12:00,2014-12-27 12:00,,2014-03-31 08:00,2014-04-10 16:00,2014-03-31 08:00,2014-04-10 16:00,2014-03-31 08:00,2014-04-10 16:00,2014-12-15 12:00,2014-12-27 12:00,,PT_Normal,,,,,chRV1f2sZEe/t/xUcxkytg,iUiM7u5jJ0OsS2T29HVn2w,,,N,0,0,,,2014-04-05 12:27,2014-04-05 13:21,admin,admin,
1175,140918,1749,35830,642,0,N,N,N,CP_Drtn,TT_Task,DT_FixedDUR2,TK_NotStart,ENG-WA-SUB-POD1010,Basement 1 Wet Areas,,1612,0,80,0,0,0,80,10,0,10,,,,2014-12-27 12:00,2015-01-10 12:00,,2014-04-12 08:00,2014-04-22 16:00,2014-04-12 08:00,2014-04-22 16:00,2014-04-12 08:00,2014-04-22 16:00,2014-12-27 12:00,2015-01-10 12:00,,PT_Normal,,,,,5kA1ykqk/ESTzEVJW9Gipw,i7WjYP0MV0u2GM9i4CiMJg,,,N,0,0,,,2014-04-05 12:27,2014-04-05 13:21,admin,admin,
1176,140919,1749,35899,642,0,N,N,N,CP_Drtn,TT_Task,DT_FixedDUR2,TK_NotStart,ENG-WA-APP-POD1000,Basement 2 Wet Areas,,1692,664,112,0,0,0,112,14,0,14,,,,2015-01-10 12:00,2015-01-26 12:00,,2014-04-12 08:00,2014-04-27 16:00,2014-04-12 08:00,2014-04-27 16:00,2014-04-12 08:00,2014-04-27 16:00,2015-01-10 12:00,2015-01-26 12:00,,PT_Normal,,,,,vr3Ox1nX2kiaNM0tEUT7ig,iUiM7u5jJ0OsS2T29HVn2w,,,N,0,0,,,2014-04-05 12:27,2014-04-05 13:21,admin,admin,
1177,140920,1749,35899,642,0,N,N,N,CP_Drtn,TT_Task,DT_FixedDUR2,TK_NotStart,ENG-WA-APP-POD1010,Basement 1 Wet Areas,,1612,584,112,0,0,0,112,14,0,14,,,,2015-01-10 12:00,2015-01-26 12:00,,2014-04-23 08:00,2014-05-10 16:00,2014-04-23 08:00,2014-05-10 16:00,2014-04-23 08:00,2014-05-10 16:00,2015-01-10 12:00,2015-01-26 12:00,,PT_Normal,,,,,bWyQnzJYBUyUClDfcIRA3g,i7WjYP0MV0u2GM9i4CiMJg,,,N,0,0,,,2014-04-05 12:27,2014-04-05 13:21,admin,admin,
1178,140921,1749,35897,642,0,N,N,N,CP_Drtn,TT_Task,DT_FixedDUR2,TK_NotStart,ENG-SC-SUB-POD1000,Basement 2 Stair Case,,2540,0,40,0,0,0,40,5,0,5,,,,2015-05-25 12:00,2015-05-31 12:00,,2014-04-23 08:00,2014-04-28 16:00,2014-04-23 08:00,2014-04-28 16:00,2014-04-23 08:00,2014-04-28 16:00,2015-05-25 12:00,2015-05-31 12:00,,PT_Normal,,,,,BLAJ9ekYr0ujWLJfbJnhtw,iUiM7u5jJ0OsS2T29HVn2w,,,N,0,0,,,2014-04-05 12:27,2014-04-05 13:21,admin,admin,
1179,140922,1749,35897,642,0,N,N,N,CP_Drtn,TT_Task,DT_FixedDUR2,TK_NotStart,ENG-SC-SUB-POD1010,Basement 1 Stair Case,,2540,0,40,0,0,0,40,5,0,5,,,,2015-05-31 12:00,2015-06-05 12:00,,2014-04-29 08:00,2014-05-05 16:00,2014-04-29 08:00,2014-05-05 16:00,2014-04-29 08:00,2014-05-05 16:00,2015-05-31 12:00,2015-06-05 12:00,,PT_Normal,,,,,EBhq4ZcTbE+QssrWjJ9qGA,i7WjYP0MV0u2GM9i4CiMJg,,,N,0,0,,,2014-04-05 12:27,2014-04-05 13:21,admin,admin,
1180,140923,1749,35771,642,0,N,N,N,CP_Drtn,TT_Task,DT_FixedDUR2,TK_NotStart,ENG-SC-APP-POD1000,Basement 2 Stair Case,,2580,1568,112,0,0,0,112,14,0,14,,,,2015-06-05 12:00,2015-06-19 12:00,,2014-04-29 08:00,2014-05-15 16:00,2014-04-29 08:00,2014-05-15 16:00,2014-04-29 08:00,2014-05-15 16:00,2015-06-05 12:00,2015-06-19 12:00,,PT_Normal,,,,,q+d1S6nYRE6syDEhJ+j5tg,iUiM7u5jJ0OsS2T29HVn2w,,,N,0,0,,,2014-04-05 12:27,2014-04-05 13:21,admin,admin,
1181,140924,1749,35771,642,0,N,N,N,CP_Drtn,TT_Task,DT_FixedDUR2,TK_NotStart,ENG-SC-APP-POD1010,Basement 1 Stair Case,,2540,1528,112,0,0,0,112,14,0,14,,,,2015-06-05 12:00,2015-06-19 12:00,,2014-05-06 08:00,2014-05-21 16:00,2014-05-06 08:00,2014-05-21 16:00,2014-05-06 08:00,2014-05-21 16:00,2015-06-05 12:00,2015-06-19 12:00,,PT_Normal,,,,,cNNm9H54uEiIh/56c/u6dw,i7WjYP0MV0u2GM9i4CiMJg,,,N,0,0,,,2014-04-05 12:27,2014-04-05 13:21,admin,admin,
1182,140925,1749,35874,642,0,N,N,N,CP_Drtn,TT_Task,DT_FixedDUR2,TK_NotStart,ENG-WP-SUB1000,Water Proofing Details,,2324,0,80,0,0,0,80,10,0,10,,,,2015-04-05 12:00,2015-04-16 12:00,,2014-04-05 08:00,2014-04-15 16:00,2014-04-05 08:00,2014-04-15 16:00,2014-04-05 08:00,2014-04-15 16:00,2015-04-05 12:00,2015-04-16 12:00,,PT_Normal,,,,,diU5ogQRsUGVawTP5DegjA,,,,N,0,0,,,2014-04-05 12:27,2014-04-05 13:21,admin,admin,
1183,140926,1749,35902,642,0,N,N,N,CP_Drtn,TT_Task,DT_FixedDUR2,TK_NotStart,ENG-WP-APP1000,Water Proofing Details,,2324,1272,112,0,0,0,112,14,0,14,,,,2015-04-16 12:00,2015-05-03 12:00,,2014-04-16 08:00,2014-05-03 16:00,2014-04-16 08:00,2014-05-03 16:00,2014-04-16 08:00,2014-05-03 16:00,2015-04-16 12:00,2015-05-03 12:00,,PT_Normal,,,,,yf7r20ktzUW6fLYKif4fSQ,EdkBVzyNwUeugDpM8Va07g,,,N,0,0,,,2014-04-05 12:27,2014-04-05 13:21,admin,admin,
1184,140927,1749,35759,642,0,N,N,N,CP_Drtn,TT_Task,DT_FixedDUR2,TK_NotStart,ENG-AL-SUB1000,Aluminum Cladding,,2880,0,240,0,0,0,240,30,0,30,,,,2015-10-20 08:00,2015-11-18 16:00,,2014-09-08 08:00,2014-10-16 16:00,2014-09-08 08:00,2014-10-16 16:00,2014-09-08 08:00,2014-10-16 16:00,2015-10-20 08:00,2015-11-18 16:00,,PT_Normal,,,,,YFdAVumx/kOTokeMbmP2ZQ,,,,N,0,0,,,2014-04-05 12:27,2014-04-05 13:21,admin,admin,
1185,140928,1749,35760,642,0,N,N,N,CP_Drtn,TT_Task,DT_FixedDUR2,TK_NotStart,ENG-AL-APP1000,Aluminum Cladding,,2880,1000,112,0,0,0,112,14,0,14,,,,2015-11-19 08:00,2015-12-02 16:00,,2014-10-18 08:00,2014-11-05 16:00,2014-10-18 08:00,2014-11-05 16:00,2014-10-18 08:00,2014-11-05 16:00,2015-11-19 08:00,2015-12-02 16:00,,PT_Normal,,,,,Jl+gXlzKG0G+OYW0CU0sXw,,,,N,0,0,,,2014-04-05 12:27,2014-04-05 13:21,admin,admin,
1186,140929,1749,35862,642,0,N,N,N,CP_Drtn,TT_Task,DT_FixedDUR2,TK_NotStart,ENG-MW-APP1000,Metal handrails,,2028,1016,112,0,0,0,112,14,0,14,,,,2015-06-05 12:00,2015-06-19 12:00,,2014-08-04 08:00,2014-08-19 16:00,2014-08-04 08:00,2014-08-19 16:00,2014-08-04 08:00,2014-08-19 16:00,2015-06-05 12:00,2015-06-19 12:00,,PT_Normal,,,,,KYztpkECnEqdT4enT5EcqQ,,,,N,0,0,,,2014-04-05 12:27,2014-04-05 13:21,admin,admin,
1187,140930,1749,35862,642,0,N,N,N,CP_Drtn,TT_Task,DT_FixedDUR2,TK_NotStart,ENG-MW-APP1010,Metal Roof Access,,2028,1016,112,0,0,0,112,14,0,14,,,,2015-06-05 12:00,2015-06-19 12:00,,2014-08-04 08:00,2014-08-19 16:00,2014-08-04 08:00,2014-08-19 16:00,2014-08-04 08:00,2014-08-19 16:00,2015-06-05 12:00,2015-06-19 12:00,,PT_Normal,,,,,mOKyLvDGlkWpw15Qi09GCA,,,,N,0,0,,,2014-04-05 12:27,2014-04-05 13:21,admin,admin,
1188,140931,1749,35822,642,0,N,N,N,CP_Drtn,TT_Task,DT_FixedDUR2,TK_NotStart,ENG-MW-SUB1000,Metal Handrails,,2028,0,160,0,0,0,160,20,0,20,,,,2015-05-13 12:00,2015-06-05 12:00,,2014-06-28 08:00,2014-08-03 16:00,2014-06-28 08:00,2014-08-03 16:00,2014-06-28 08:00,2014-08-03 16:00,2015-05-13 12:00,2015-06-05 12:00,,PT_Normal,,,,,UmBuoZb8Uk+VIO/CL0W2xg,,,,N,0,0,,,2014-04-05 12:27,2014-04-05 13:21,admin,admin,
1189,140932,1749,35822,642,0,N,N,N,CP_Drtn,TT_Task,DT_FixedDUR2,TK_NotStart,ENG-MW-SUB1010,Metal Roof Access,,2028,0,160,0,0,0,160,20,0,20,,,,2015-05-13 12:00,2015-06-05 12:00,,2014-06-28 08:00,2014-08-03 16:00,2014-06-28 08:00,2014-08-03 16:00,2014-06-28 08:00,2014-08-03 16:00,2015-05-13 12:00,2015-06-05 12:00,,PT_Normal,,,,,l8xs5AoiaE6C1mGu3pTbVg,,,,N,0,0,,,2014-04-05 12:27,2014-04-05 13:21,admin,admin,
1190,140933,1749,35824,642,0,N,N,N,CP_Drtn,TT_Task,DT_FixedDUR2,TK_NotStart,ENG-SI-SUB1000,Kitchen Units & Vanities Counter,,2188,0,240,0,0,0,240,30,0,30,,,,2015-05-19 12:00,2015-06-20 12:00,,2014-06-09 08:00,2014-07-24 14:00,2014-06-09 08:00,2014-07-24 14:00,2014-06-09 08:00,2014-07-24 14:00,2015-05-19 12:00,2015-06-20 12:00,,PT_Normal,,,,,qjtbahcW00ehQJYVXBeXeg,,,,N,0,0,,,2014-04-05 12:27,2014-04-05 13:21,admin,admin,
1191,140934,1749,35698,642,0,N,N,N,CP_Drtn,TT_Task,DT_FixedDUR2,TK_NotStart,ENG-SI-APP1000,Kitchen Units & Vanities Counter,,2188,1176,112,0,0,0,112,14,0,14,,,,2015-06-20 12:00,2015-07-04 12:00,,2014-07-25 10:00,2014-08-13 16:00,2014-07-25 10:00,2014-08-13 16:00,2014-07-25 10:00,2014-08-13 16:00,2015-06-20 12:00,2015-07-04 12:00,,PT_Normal,,,,,64unu7j1f0Cx2F3TA2gzsg,,,,N,0,0,,,2014-04-05 12:27,2014-04-05 13:21,admin,admin,
1192,140935,1749,35827,642,0,N,N,N,CP_Drtn,TT_Task,DT_FixedDUR2,TK_NotStart,ENG-TYP-SUB1000,Typical Detail,,1568,0,80,0,0,0,80,10,0,10,,,,2014-11-16 08:00,2014-11-26 16:00,,2014-03-08 08:00,2014-03-18 16:00,2014-03-08 08:00,2014-03-18 16:00,2014-03-08 08:00,2014-03-18 16:00,2014-11-16 08:00,2014-11-26 16:00,,PT_Normal,,,,,bDL850PbTEWmdTARNPwU0A,,,,N,0,0,,,2014-04-05 12:27,2014-04-05 13:21,admin,admin,
1193,140936,1749,35828,642,0,N,N,N,CP_Drtn,TT_Task,DT_FixedDUR2,TK_NotStart,ENG-TYP-APP1000,Typical Detail,,1852,824,112,0,0,0,112,14,0,14,,,,2015-01-10 12:00,2015-01-26 12:00,,2014-03-19 08:00,2014-04-03 16:00,2014-03-19 08:00,2014-04-03 16:00,2014-03-19 08:00,2014-04-03 16:00,2015-01-10 12:00,2015-01-26 12:00,,PT_Normal,,,,,MjuninaSBUu/lfRoeFi/1Q,,,,N,0,0,,,2014-04-05 12:27,2014-04-05 13:21,admin,admin,
1194,140937,1749,35703,642,0,N,N,N,CP_Drtn,TT_Task,DT_FixedDUR2,TK_NotStart,ENG-FS-SUB-BL11000,Finish Schedule,,1476,0,80,0,0,0,80,10,0,10,,,,2015-03-12 12:00,2015-03-24 12:00,,2014-07-27 10:00,2014-08-10 16:00,2014-07-27 10:00,2014-08-10 16:00,2014-07-27 10:00,2014-08-10 16:00,2015-03-12 12:00,2015-03-24 12:00,,PT_Normal,,,,,gPBzUygtdEGeEFfwt/8t7w,,,,N,0,0,,,2014-04-05 12:27,2014-04-05 13:21,admin,admin,
1195,140938,1749,35692,642,0,N,N,N,CP_Drtn,TT_Task,DT_FixedDUR2,TK_NotStart,ENG-FS-APP-BL11000,Finish Schedule,,1476,424,112,0,0,0,112,14,0,14,,,,2015-03-24 12:00,2015-04-09 12:00,,2014-08-11 08:00,2014-08-26 16:00,2014-08-11 08:00,2014-08-26 16:00,2014-08-11 08:00,2014-08-26 16:00,2015-03-24 12:00,2015-04-09 12:00,,PT_Normal,,,,,Z0oJCkjQS0OyEgFVxWgYIA,,,,N,0,0,,,2014-04-05 12:27,2014-04-05 13:21,admin,admin,
1196,140939,1749,35900,642,0,N,N,N,CP_Drtn,TT_Task,DT_FixedDUR2,TK_NotStart,ENG-WA-SUB-BL21000,Ground Floor,,1336,0,40,0,0,0,40,5,0,5,,,,2015-01-22 08:00,2015-01-27 16:00,,2014-06-16 08:00,2014-06-22 16:00,2014-06-16 08:00,2014-06-22 16:00,2014-06-16 08:00,2014-06-22 16:00,2015-01-22 08:00,2015-01-27 16:00,,PT_Normal,,,,,RFedH5G3IEGJg1HSYjMmtA,KdN4YtV3sE6R8dwNKy7TUg,,,N,0,0,,,2014-04-05 12:27,2014-04-05 13:21,admin,admin,
1197,140940,1749,35900,642,0,N,N,N,CP_Drtn,TT_Task,DT_FixedDUR2,TK_NotStart,ENG-WA-SUB-BL21010,First Floor,,1136,0,40,0,0,0,40,5,0,5,,,,2014-12-28 08:00,2015-01-04 16:00,,2014-06-23 08:00,2014-06-28 16:00,2014-06-23 08:00,2014-06-28 16:00,2014-06-23 08:00,2014-06-28 16:00,2014-12-28 08:00,2015-01-04 16:00,,PT_Normal,,,,,DkKYvp6DWEOfhLRNpzrMnA,bD0r9yHF0kqIV0PDkMk7bQ,,,N,0,0,,,2014-04-05 12:27,2014-04-05 13:21,admin,admin,
1198,140941,1749,35900,642,0,N,N,N,CP_Drtn,TT_Task,DT_FixedDUR2,TK_NotStart,ENG-WA-SUB-BL21020,2nd to 8th Floor,,1408,0,40,0,0,0,40,5,0,5,,,,2015-02-14 08:00,2015-02-18 16:00,,2014-06-29 08:00,2014-07-06 14:00,2014-06-29 08:00,2014-07-06 14:00,2014-06-29 08:00,2014-07-06 14:00,2015-02-14 08:00,2015-02-18 16:00,,PT_Normal,,,,,vNEuRjaFRkGU0b6jjasLMw,DHZCx1YunUyEqetMEzlf3A,,,N,0,0,,,2014-04-05 12:27,2014-04-05 13:21,admin,admin,
1199,140942,1749,35900,642,0,N,N,N,CP_Drtn,TT_Task,DT_FixedDUR2,TK_NotStart,ENG-WA-SUB-BL21030,Roof Floor,,1368,0,40,0,0,0,40,5,0,5,,,,2015-02-14 08:00,2015-02-18 16:00,,2014-07-07 10:00,2014-07-16 14:00,2014-07-07 10:00,2014-07-16 14:00,2014-07-07 10:00,2014-07-16 14:00,2015-02-14 08:00,2015-02-18 16:00,,PT_Normal,,,,,Re22fUvyPEKV2KqNh+f2sg,DmRZnQlkiUOjflWCHer6cQ,,,N,0,0,,,2014-04-05 12:27,2014-04-05 13:21,admin,admin,
1200,140943,1749,35835,642,0,N,N,N,CP_Drtn,TT_Task,DT_FixedDUR2,TK_NotStart,ENG-WA-APP-BL21000,Ground Floor,,1488,968,112,0,0,0,112,14,0,14,,,,2015-02-19 08:00,2015-03-07 16:00,,2014-06-23 08:00,2014-07-14 14:00,2014-06-23 08:00,2014-07-14 14:00,2014-06-23 08:00,2014-07-14 14:00,2015-02-19 08:00,2015-03-07 16:00,,PT_Normal,,,,,5PrE8UC5Sk2LUBqMpeizGw,yfgSVGwt7UaV3PRnPjsvwA,,,N,0,0,,,2014-04-05 12:27,2014-04-05 13:21,admin,admin,
1201,140944,1749,35835,642,0,N,N,N,CP_Drtn,TT_Task,DT_FixedDUR2,TK_NotStart,ENG-WA-APP-BL21010,First Floor,,1448,928,112,0,0,0,112,14,0,14,,,,2015-02-19 08:00,2015-03-07 16:00,,2014-06-29 08:00,2014-07-24 14:00,2014-06-29 08:00,2014-07-24 14:00,2014-06-29 08:00,2014-07-24 14:00,2015-02-19 08:00,2015-03-07 16:00,,PT_Normal,,,,,AblMcKg2f0Sw6OVRGBJCGw,cbak5MGS7UGTmGMM+ddjgQ,,,N,0,0,,,2014-04-05 12:27,2014-04-05 13:21,admin,admin,
1202,140945,1749,35835,642,0,N,N,N,CP_Drtn,TT_Task,DT_FixedDUR2,TK_NotStart,ENG-WA-APP-BL21020,2nd to 8th Floor,,1408,888,112,0,0,0,112,14,0,14,,,,2015-02-19 08:00,2015-03-07 16:00,,2014-07-07 10:00,2014-08-03 16:00,2014-07-07 10:00,2014-08-03 16:00,2014-07-07 10:00,2014-08-03 16:00,2015-02-19 08:00,2015-03-07 16:00,,PT_Normal,,,,,agG4nZX2MEGwSkrf2qSDRA,GHm4eo87aUWj5ceSm5lZWA,,,N,0,0,,,2014-04-05 12:27,2014-04-05 13:21,admin,admin,
1203,140946,1749,35835,642,0,N,N,N,CP_Drtn,TT_Task,DT_FixedDUR2,TK_NotStart,ENG-WA-APP-BL21030,Roof Floor,,1368,848,112,0,0,0,112,14,0,14,,,,2015-02-19 08:00,2015-03-07 16:00,,2014-07-17 10:00,2014-08-09 16:00,2014-07-17 10:00,2014-08-09 16:00,2014-07-17 10:00,2014-08-09 16:00,2015-02-19 08:00,2015-03-07 16:00,,PT_Normal,,,,,KyQrcRrEQkSCqf4mbGiKdw,ZFb6fqxAmEGUlp+m/Ue1TA,,,N,0,0,,,2014-04-05 12:27,2014-04-05 13:21,admin,admin,
1204,140947,1749,35837,642,0,N,N,N,CP_Drtn,TT_Task,DT_FixedDUR2,TK_NotStart,ENG-BW-APP-BL21000,Ground Floor,,1608,216,112,0,0,0,112,14,0,14,,,,2014-12-15 08:00,2014-12-30 16:00,,2014-03-31 08:00,2014-04-15 16:00,2014-03-31 08:00,2014-04-15 16:00,2014-03-31 08:00,2014-04-15 16:00,2014-12-15 08:00,2014-12-30 16:00,,PT_Normal,,,,,HDyAMkA3yEaCbrrnRRtSPQ,QF274Q5HcEmIxTCDlNcOGQ,,,N,0,0,,,2014-04-05 12:27,2014-04-05 13:21,admin,admin,
1205,140948,1749,35837,642,0,N,N,N,CP_Drtn,TT_Task,DT_FixedDUR2,TK_NotStart,ENG-BW-APP-BL21010,First Floor,,2008,1488,112,0,0,0,112,14,0,14,,,,2015-02-19 08:00,2015-03-07 16:00,,2014-04-06 08:00,2014-04-21 16:00,2014-04-06 08:00,2014-04-21 16:00,2014-04-06 08:00,2014-04-21 16:00,2015-02-19 08:00,2015-03-07 16:00,,PT_Normal,,,,,QxJhqwfBkEq1vpJl782G1g,JjmSxgGXg0esQn0ag4nzyg,,,N,0,0,,,2014-04-05 12:27,2014-04-05 13:21,admin,admin,
1206,140949,1749,35837,642,0,N,N,N,CP_Drtn,TT_Task,DT_FixedDUR2,TK_NotStart,ENG-BW-APP-BL21020,2nd to 8th Floor,,1968,1448,112,0,0,0,112,14,0,14,,,,2015-02-19 08:00,2015-03-07 16:00,,2014-04-12 08:00,2014-04-27 16:00,2014-04-12 08:00,2014-04-27 16:00,2014-04-12 08:00,2014-04-27 16:00,2015-02-19 08:00,2015-03-07 16:00,,PT_Normal,,,,,Hg5lo9DqUk29luYIznB2Aw,GAoKrp8ng0uRMPE5QkoV5Q,,,N,0,0,,,2014-04-05 12:27,2014-04-05 13:21,admin,admin,
1207,140950,1749,35837,642,0,N,N,N,CP_Drtn,TT_Task,DT_FixedDUR2,TK_NotStart,ENG-BW-APP-BL21030,Roof,,1928,1408,112,0,0,0,112,14,0,14,,,,2015-02-19 08:00,2015-03-07 16:00,,2014-04-17 08:00,2014-05-04 16:00,2014-04-17 08:00,2014-05-04 16:00,2014-04-17 08:00,2014-05-04 16:00,2015-02-19 08:00,2015-03-07 16:00,,PT_Normal,,,,,KZ4oxDGI0kqGPpDOuBRpDw,Lk8nyGjLl02YlZL/VyyaMw,,,N,0,0,,,2014-04-05 12:27,2014-04-05 13:21,admin,admin,
1208,140951,1749,35838,642,0,N,N,N,CP_Drtn,TT_Task,DT_FixedDUR2,TK_NotStart,ENG-BW-SUB-BL21000,Ground Floor,,1568,0,40,0,0,0,40,5,0,5,,,,2014-12-03 08:00,2014-12-08 16:00,,2014-03-25 08:00,2014-03-30 16:00,2014-03-25 08:00,2014-03-30 16:00,2014-03-25 08:00,2014-03-30 16:00,2014-12-03 08:00,2014-12-08 16:00,,PT_Normal,,,,,GtBawtbED0KY1nQTPavipw,QeDXYUGt30e1HFQyGIHzxA,,,N,0,0,,,2014-04-05 12:27,2014-04-05 13:21,admin,admin,
1209,140952,1749,35838,642,0,N,N,N,CP_Drtn,TT_Task,DT_FixedDUR2,TK_NotStart,ENG-BW-SUB-BL21010,First Floor,,1848,0,40,0,0,0,40,5,0,5,,,,2015-01-21 08:00,2015-01-26 16:00,,2014-03-31 08:00,2014-04-05 16:00,2014-03-31 08:00,2014-04-05 16:00,2014-03-31 08:00,2014-04-05 16:00,2015-01-21 08:00,2015-01-26 16:00,,PT_Normal,,,,,lPm+/7VNb0eDo00rwU+OsA,zUvHglnHQ0CeVbuz0z5aBg,,,N,0,0,,,2014-04-05 12:27,2014-04-05 13:21,admin,admin,
1210,140953,1749,35838,642,0,N,N,N,CP_Drtn,TT_Task,DT_FixedDUR2,TK_NotStart,ENG-BW-SUB-BL21020,2nd to 8th Floor,,1696,0,40,0,0,0,40,5,0,5,,,,2015-01-05 08:00,2015-01-10 16:00,,2014-04-06 08:00,2014-04-10 16:00,2014-04-06 08:00,2014-04-10 16:00,2014-04-06 08:00,2014-04-10 16:00,2015-01-05 08:00,2015-01-10 16:00,,PT_Normal,,,,,rb/yTTyGT0+CKfYWg288dA,s4oMG4RX50CwRTdzpRVFtw,,,N,0,0,,,2014-04-05 12:27,2014-04-05 13:21,admin,admin,
1211,140954,1749,35838,642,0,N,N,N,CP_Drtn,TT_Task,DT_FixedDUR2,TK_NotStart,ENG-BW-SUB-BL21030,Roof,,1928,0,40,0,0,0,40,5,0,5,,,,2015-02-14 08:00,2015-02-18 16:00,,2014-04-12 08:00,2014-04-16 16:00,2014-04-12 08:00,2014-04-16 16:00,2014-04-12 08:00,2014-04-16 16:00,2015-02-14 08:00,2015-02-18 16:00,,PT_Normal,,,,,ZgTu5HAzZky9qy9DSruyKA,IVmzy4BV/UeJEST9Nz1jvQ,,,N,0,0,,,2014-04-05 12:27,2014-04-05 13:21,admin,admin,
1212,140955,1749,35772,642,0,N,N,N,CP_Drtn,TT_Task,DT_FixedDUR2,TK_NotStart,ENG-SC-SUB-BL21000,Stair Detail,,2672,0,80,0,0,0,80,10,0,10,,,,2015-06-12 08:00,2015-06-21 16:00,,2014-04-23 08:00,2014-05-05 16:00,2014-04-23 08:00,2014-05-05 16:00,2014-04-23 08:00,2014-05-05 16:00,2015-06-12 08:00,2015-06-21 16:00,,PT_Normal,,,,,ZDD8pP3qEEWriOEEj3zSxA,EPvsaa0ll0OBH7EuqcA3fw,,,N,0,0,,,2014-04-05 12:27,2014-04-05 13:21,admin,admin,
1213,140956,1749,35728,642,0,N,N,N,CP_Drtn,TT_Task,DT_FixedDUR2,TK_NotStart,ENG-SC-APP-BL21000,Stair Detail,,2888,2248,112,0,0,0,112,14,0,14,,,,2015-07-19 08:00,2015-08-01 16:00,,2014-05-06 08:00,2014-05-21 16:00,2014-05-06 08:00,2014-05-21 16:00,2014-05-06 08:00,2014-05-21 16:00,2015-07-19 08:00,2015-08-01 16:00,,PT_Normal,,,,,3Dbxc1Od9022KQvdbE8iaw,Cx+8P+JFaEuU06OUanfoHQ,,,N,0,0,,,2014-04-05 12:27,2014-04-05 13:21,admin,admin,
1214,140957,1749,35734,642,0,N,N,N,CP_Drtn,TT_Task,DT_FixedDUR2,TK_NotStart,ENG-FT-SUB-BL21000,Ground Floor,,2424,0,80,0,0,0,80,10,0,10,,,,2015-05-20 08:00,2015-05-31 16:00,,2014-05-06 08:00,2014-05-17 16:00,2014-05-06 08:00,2014-05-17 16:00,2014-05-06 08:00,2014-05-17 16:00,2015-05-20 08:00,2015-05-31 16:00,,PT_Normal,,,,,gobs9boeVUSTEoLJeaVVnQ,f0jX+OdzfEW4jzPkFfnIRw,,,N,0,0,,,2014-04-05 12:27,2014-04-05 13:21,admin,admin,
1215,140958,1749,35734,642,0,N,N,N,CP_Drtn,TT_Task,DT_FixedDUR2,TK_NotStart,ENG-FT-SUB-BL21010,First Floor,,2392,0,80,0,0,0,80,10,0,10,,,,2015-05-27 08:00,2015-06-06 16:00,,2014-05-18 08:00,2014-05-28 16:00,2014-05-18 08:00,2014-05-28 16:00,2014-05-18 08:00,2014-05-28 16:00,2015-05-27 08:00,2015-06-06 16:00,,PT_Normal,,,,,1uOEA614e02kOOqrwZ8opA,dzrgrG69O0GjZBaVRxeTdQ,,,N,0,0,,,2014-04-05 12:27,2014-04-05 13:21,admin,admin,
1216,140959,1749,35734,642,0,N,N,N,CP_Drtn,TT_Task,DT_FixedDUR2,TK_NotStart,ENG-FT-SUB-BL21020,2nd to 8th Floor,,2312,0,80,0,0,0,80,10,0,10,,,,2015-05-27 08:00,2015-06-06 16:00,,2014-05-29 08:00,2014-06-09 16:00,2014-05-29 08:00,2014-06-09 16:00,2014-05-29 08:00,2014-06-09 16:00,2015-05-27 08:00,2015-06-06 16:00,,PT_Normal,,,,,Oi7VxujwH0i7ZhlG7YuZLg,VzsoZfkHaU+XWoWLajejag,,,N,0,0,,,2014-04-05 12:27,2014-04-05 13:21,admin,admin,
1217,140960,1749,35844,642,0,N,N,N,CP_Drtn,TT_Task,DT_FixedDUR2,TK_NotStart,ENG-FT-APP-BL21000,Ground Floor,,2472,1832,112,0,0,0,112,14,0,14,,,,2015-06-07 08:00,2015-06-20 16:00,,2014-05-18 08:00,2014-06-02 16:00,2014-05-18 08:00,2014-06-02 16:00,2014-05-18 08:00,2014-06-02 16:00,2015-06-07 08:00,2015-06-20 16:00,,PT_Normal,,,,,45LEtlLiGUSTq9nlT52A9Q,TMj3fVoEX0KBniPA4/EeEw,,,N,0,0,,,2014-04-05 12:27,2014-04-05 13:21,admin,admin,
1218,140961,1749,35844,642,0,N,N,N,CP_Drtn,TT_Task,DT_FixedDUR2,TK_NotStart,ENG-FT-APP-BL21010,First Floor,,2392,1752,112,0,0,0,112,14,0,14,,,,2015-06-07 08:00,2015-06-20 16:00,,2014-05-29 08:00,2014-06-14 16:00,2014-05-29 08:00,2014-06-14 16:00,2014-05-29 08:00,2014-06-14 16:00,2015-06-07 08:00,2015-06-20 16:00,,PT_Normal,,,,,9SngQpc7+Eqw3D7VnM0V4A,hBLAg/UJc0uIZVJGARibCA,,,N,0,0,,,2014-04-05 12:27,2014-04-05 13:21,admin,admin,
1219,140962,1749,35844,642,0,N,N,N,CP_Drtn,TT_Task,DT_FixedDUR2,TK_NotStart,ENG-FT-APP-BL21020,2nd to 8th Floor,,2312,1672,112,0,0,0,112,14,0,14,,,,2015-06-07 08:00,2015-06-20 16:00,,2014-06-10 08:00,2014-06-26 16:00,2014-06-10 08:00,2014-06-26 16:00,2014-06-10 08:00,2014-06-26 16:00,2015-06-07 08:00,2015-06-20 16:00,,PT_Normal,,,,,y6ZeiHrMyEO8GELZOn9Bog,WsYGMRUpeEOy29frFr1XFg,,,N,0,0,,,2014-04-05 12:27,2014-04-05 13:21,admin,admin,
1220,140963,1749,35778,642,0,N,N,N,CP_Drtn,TT_Task,DT_FixedDUR2,TK_NotStart,ENG-FC-SUB-BL21000,Ground Floor,,888,0,80,0,0,0,80,10,0,10,,,,2014-11-10 08:00,2014-11-20 16:00,,2014-06-10 08:00,2014-06-22 16:00,2014-06-10 08:00,2014-06-22 16:00,2014-06-10 08:00,2014-06-22 16:00,2014-11-10 08:00,2014-11-20 16:00,,PT_Normal,,,,,P3fx9ld2skqichCOsUUBQQ,csxJQ7DVPU+r7IHsSoDAlA,,,N,0,0,,,2014-04-05 12:27,2014-04-05 13:21,admin,admin,
1221,140964,1749,35778,642,0,N,N,N,CP_Drtn,TT_Task,DT_FixedDUR2,TK_NotStart,ENG-FC-SUB-BL21010,First Floor,,1112,0,80,0,0,0,80,10,0,10,,,,2014-12-24 08:00,2015-01-06 16:00,,2014-06-23 08:00,2014-07-06 14:00,2014-06-23 08:00,2014-07-06 14:00,2014-06-23 08:00,2014-07-06 14:00,2014-12-24 08:00,2015-01-06 16:00,,PT_Normal,,,,,oiwZ2AsKP02rwiF3BYtemg,/F0qDbm6rE+S/4L3DYi/rQ,,,N,0,0,,,2014-04-05 12:27,2014-04-05 13:21,admin,admin,
1222,140965,1749,35778,642,0,N,N,N,CP_Drtn,TT_Task,DT_FixedDUR2,TK_NotStart,ENG-FC-SUB-BL21020,2nd to 8th Floor,,1128,0,80,0,0,0,80,10,0,10,,,,2015-01-10 08:00,2015-01-20 16:00,,2014-07-07 10:00,2014-07-26 14:00,2014-07-07 10:00,2014-07-26 14:00,2014-07-07 10:00,2014-07-26 14:00,2015-01-10 08:00,2015-01-20 16:00,,PT_Normal,,,,,SgKhec1KT0mHT80Q+/GHYw,/Q9DGz21OUG3vNoKEnNoxw,,,N,0,0,,,2014-04-05 12:27,2014-04-05 13:21,admin,admin,
1223,140966,1749,35778,642,0,N,N,N,CP_Drtn,TT_Task,DT_FixedDUR2,TK_NotStart,ENG-FC-SUB-BL21030,Roof Floor,,1160,0,80,0,0,0,80,10,0,10,,,,2015-01-26 08:00,2015-02-05 16:00,,2014-07-27 10:00,2014-08-10 16:00,2014-07-27 10:00,2014-08-10 16:00,2014-07-27 10:00,2014-08-10 16:00,2015-01-26 08:00,2015-02-05 16:00,,PT_Normal,,,,,SnfnbuVAp0ObZ0eUYMUqsg,wnGyINd1MU6Vte/3mmNv1g,,,N,0,0,,,2014-04-05 12:27,2014-04-05 13:21,admin,admin,
1224,140967,1749,35779,642,0,N,N,N,CP_Drtn,TT_Task,DT_FixedDUR2,TK_NotStart,ENG-FC-APP-BL21000,Ground Floor,,968,80,112,0,0,0,112,14,0,14,,,,2014-12-03 08:00,2014-12-18 16:00,,2014-06-23 08:00,2014-07-14 14:00,2014-06-23 08:00,2014-07-14 14:00,2014-06-23 08:00,2014-07-14 14:00,2014-12-03 08:00,2014-12-18 16:00,,PT_Normal,,,,,pjGGGHXU90+nJqI+M+id6w,buPnkBvT90aOqagFo/d1DQ,,,N,0,0,,,2014-04-05 12:27,2014-04-05 13:21,admin,admin,
1225,140968,1749,35779,642,0,N,N,N,CP_Drtn,TT_Task,DT_FixedDUR2,TK_NotStart,ENG-FC-APP-BL21010,First Floor,,1208,224,112,0,0,0,112,14,0,14,,,,2015-01-21 08:00,2015-02-05 16:00,,2014-07-07 10:00,2014-08-03 16:00,2014-07-07 10:00,2014-08-03 16:00,2014-07-07 10:00,2014-08-03 16:00,2015-01-21 08:00,2015-02-05 16:00,,PT_Normal,,,,,8WNAvLezPEuiKShtMMXtHw,Abpso18O906M1zX8e+cFeg,,,N,0,0,,,2014-04-05 12:27,2014-04-05 13:21,admin,admin,
1226,140969,1749,35779,642,0,N,N,N,CP_Drtn,TT_Task,DT_FixedDUR2,TK_NotStart,ENG-FC-APP-BL21020,2nd to 8th Floor,,1128,144,112,0,0,0,112,14,0,14,,,,2015-01-21 08:00,2015-02-05 16:00,,2014-07-27 10:00,2014-08-14 16:00,2014-07-27 10:00,2014-08-14 16:00,2014-07-27 10:00,2014-08-14 16:00,2015-01-21 08:00,2015-02-05 16:00,,PT_Normal,,,,,OIcjuICR9EyuHXDF2vNjdQ,FeZN2lNebEm6gp4hkVNEUg,,,N,0,0,,,2014-04-05 12:27,2014-04-05 13:21,admin,admin,
1227,140970,1749,35779,642,0,N,N,N,CP_Drtn,TT_Task,DT_FixedDUR2,TK_NotStart,ENG-FC-APP-BL21030,Roof Floor,,1160,264,112,0,0,0,112,14,0,14,,,,2015-02-07 08:00,2015-02-22 16:00,,2014-08-11 08:00,2014-08-26 16:00,2014-08-11 08:00,2014-08-26 16:00,2014-08-11 08:00,2014-08-26 16:00,2015-02-07 08:00,2015-02-22 16:00,,PT_Normal,,,,,0TouAtOFNkCPruIAkH8Ibg,lUZW5fOHzkO3LrJaHAJGaw,,,N,0,0,,,2014-04-05 12:27,2014-04-05 13:21,admin,admin,
1228,140971,1749,35722,642,0,N,N,N,CP_Drtn,TT_Task,DT_FixedDUR2,TK_NotStart,ENG-DS-SUB-BL21000,Roof Floor,,2376,0,80,0,0,0,80,10,0,10,,,,2015-07-24 08:00,2015-08-02 16:00,,2014-08-10 08:00,2014-08-20 16:00,2014-08-10 08:00,2014-08-20 16:00,2014-08-10 08:00,2014-08-20 16:00,2015-07-24 08:00,2015-08-02 16:00,,PT_Normal,,,,,2lLto2LGOkCwRzsRHd65Hg,Evg4suGtVEmcccHPbwgLGA,,,N,0,0,,,2014-04-05 12:27,2014-04-05 13:21,admin,admin,
1229,140972,1749,35722,642,0,N,N,N,CP_Drtn,TT_Task,DT_FixedDUR2,TK_NotStart,ENG-DS-SUB-BL21010,Ground Floor,,2000,0,80,0,0,0,80,10,0,10,,,,2015-05-04 08:00,2015-05-14 16:00,,2014-06-22 08:00,2014-07-04 14:00,2014-06-22 08:00,2014-07-04 14:00,2014-06-22 08:00,2014-07-04 14:00,2015-05-04 08:00,2015-05-14 16:00,,PT_Normal,,,,,E896z0+i4US3bMUKLuLKzw,jPLtlpH/b0iexGceZ2Cg0w,,,N,0,0,,,2014-04-05 12:27,2014-04-05 13:21,admin,admin,
1230,140973,1749,35722,642,0,N,N,N,CP_Drtn,TT_Task,DT_FixedDUR2,TK_NotStart,ENG-DS-SUB-BL21020,First Floor,,2536,0,80,0,0,0,80,10,0,10,,,,2015-07-24 08:00,2015-08-02 16:00,,2014-07-05 10:00,2014-07-24 14:00,2014-07-05 10:00,2014-07-24 14:00,2014-07-05 10:00,2014-07-24 14:00,2015-07-24 08:00,2015-08-02 16:00,,PT_Normal,,,,,Z2s9IFVpjkWnw2yLFe2u9Q,XpMI27xyTU2ci5gSh1QscA,,,N,0,0,,,2014-04-05 12:27,2014-04-05 13:21,admin,admin,
1231,140974,1749,35722,642,0,N,N,N,CP_Drtn,TT_Task,DT_FixedDUR2,TK_NotStart,ENG-DS-SUB-BL21030,2nd to 8th Floor,,2456,0,80,0,0,0,80,10,0,10,,,,2015-07-24 08:00,2015-08-02 16:00,,2014-07-25 10:00,2014-08-09 16:00,2014-07-25 10:00,2014-08-09 16:00,2014-07-25 10:00,2014-08-09 16:00,2015-07-24 08:00,2015-08-02 16:00,,PT_Normal,,,,,8vfh7QA7E0uE2Ktup1Wsyw,tWj50XgQkUmyKRUdfnbkdA,,,N,0,0,,,2014-04-05 12:27,2014-04-05 13:21,admin,admin,
1232,140975,1749,35679,642,0,N,N,N,CP_Drtn,TT_Task,DT_FixedDUR2,TK_NotStart,ENG-DS-APP-BL21000,Roof Floor,,2376,1736,112,0,0,0,112,14,0,14,,,,2015-08-03 08:00,2015-08-16 16:00,,2014-08-21 08:00,2014-09-06 16:00,2014-08-21 08:00,2014-09-06 16:00,2014-08-21 08:00,2014-09-06 16:00,2015-08-03 08:00,2015-08-16 16:00,,PT_Normal,,,,,/nGczN4vtkiMh8NH1QUwQQ,EqqU0TrysU6LUme41mBKRA,,,N,0,0,,,2014-04-05 12:27,2014-04-05 13:21,admin,admin,
1233,140976,1749,35679,642,0,N,N,N,CP_Drtn,TT_Task,DT_FixedDUR2,TK_NotStart,ENG-DS-APP-BL21010,Ground Floor,,2616,1976,112,0,0,0,112,14,0,14,,,,2015-08-03 08:00,2015-08-16 16:00,,2014-07-05 10:00,2014-08-02 16:00,2014-07-05 10:00,2014-08-02 16:00,2014-07-05 10:00,2014-08-02 16:00,2015-08-03 08:00,2015-08-16 16:00,,PT_Normal,,,,,l+yAa3Yx+EWvcaQ57+KF7Q,b9ui1iG1p0+/p4tbnlkjdg,,,N,0,0,,,2014-04-05 12:27,2014-04-05 13:21,admin,admin,
1234,140977,1749,35679,642,0,N,N,N,CP_Drtn,TT_Task,DT_FixedDUR2,TK_NotStart,ENG-DS-APP-BL21020,First Floor,,2536,1896,112,0,0,0,112,14,0,14,,,,2015-08-03 08:00,2015-08-16 16:00,,2014-07-25 10:00,2014-08-13 16:00,2014-07-25 10:00,2014-08-13 16:00,2014-07-25 10:00,2014-08-13 16:00,2015-08-03 08:00,2015-08-16 16:00,,PT_Normal,,,,,YUhPNFZ6IkOqSA+SucowMA,UFJfIE2YMU21bbOr2sKpew,,,N,0,0,,,2014-04-05 12:27,2014-04-05 13:21,admin,admin,
1235,140978,1749,35679,642,0,N,N,N,CP_Drtn,TT_Task,DT_FixedDUR2,TK_NotStart,ENG-DS-APP-BL21030,2nd to 8th Floor,,2456,1816,112,0,0,0,112,14,0,14,,,,2015-08-03 08:00,2015-08-16 16:00,,2014-08-10 08:00,2014-08-25 16:00,2014-08-10 08:00,2014-08-25 16:00,2014-08-10 08:00,2014-08-25 16:00,2015-08-03 08:00,2015-08-16 16:00,,PT_Normal,,,,,6pvzPBiUG0GZbe4rPjPtoA,9XnIHT9H3kW+HcK2rM2ZgA,,,N,0,0,,,2014-04-05 12:27,2014-04-05 13:21,admin,admin,
1236,140979,1749,35812,642,0,N,N,N,CP_Drtn,TT_Task,DT_FixedDUR2,TK_NotStart,ENG-FC-SUB-BL31000,Ground Floor,,888,0,80,0,0,0,80,10,0,10,,,,2014-11-22 08:00,2014-12-02 16:00,,2014-06-23 08:00,2014-07-06 14:00,2014-06-23 08:00,2014-07-06 14:00,2014-06-23 08:00,2014-07-06 14:00,2014-11-22 08:00,2014-12-02 16:00,,PT_Normal,,,,,j2Gqt0xT2UKEohXS3AgBlg,j3R5CuoYb0KcbZeMfT5Pgg,,,N,0,0,,,2014-04-05 12:27,2014-04-05 13:21,admin,admin,
1237,140980,1749,35812,642,0,N,N,N,CP_Drtn,TT_Task,DT_FixedDUR2,TK_NotStart,ENG-FC-SUB-BL31010,First Floor,,1112,0,80,0,0,0,80,10,0,10,,,,2015-01-07 08:00,2015-01-18 16:00,,2014-07-07 10:00,2014-07-26 14:00,2014-07-07 10:00,2014-07-26 14:00,2014-07-07 10:00,2014-07-26 14:00,2015-01-07 08:00,2015-01-18 16:00,,PT_Normal,,,,,N4ISE1EiaEa5OpWVplbZvQ,Yp2OgzMQkkCebRavYc+z/Q,,,N,0,0,,,2014-04-05 12:27,2014-04-05 13:21,admin,admin,
1238,140981,1749,35812,642,0,N,N,N,CP_Drtn,TT_Task,DT_FixedDUR2,TK_NotStart,ENG-FC-SUB-BL31020,2nd Floor,,1112,0,80,0,0,0,80,10,0,10,,,,2015-01-19 08:00,2015-01-29 16:00,,2014-07-27 10:00,2014-08-10 16:00,2014-07-27 10:00,2014-08-10 16:00,2014-07-27 10:00,2014-08-10 16:00,2015-01-19 08:00,2015-01-29 16:00,,PT_Normal,,,,,US11kdGJCkuh+e1ElM9vSA,+HZh33Z5i0yCyAjaW9x3Hg,,,N,0,0,,,2014-04-05 12:27,2014-04-05 13:21,admin,admin,
1239,140982,1749,35812,642,0,N,N,N,CP_Drtn,TT_Task,DT_FixedDUR2,TK_NotStart,ENG-FC-SUB-BL31030,Roof Floor,,1832,0,80,0,0,0,80,10,0,10,,,,2015-06-07 08:00,2015-06-16 16:00,,2014-09-03 08:00,2014-09-14 16:00,2014-09-03 08:00,2014-09-14 16:00,2014-09-03 08:00,2014-09-14 16:00,2015-06-07 08:00,2015-06-16 16:00,,PT_Normal,,,,,2hXQ8Iks3ECn1cHtD/qQKA,glqOGVphOESSz9XEotbv3A,,,N,0,0,,,2014-04-05 12:27,2014-04-05 13:21,admin,admin,
1240,140983,1749,35812,642,0,N,N,N,CP_Drtn,TT_Task,DT_FixedDUR2,TK_NotStart,ENG-FC-SUB-BL31040,3rd Floor,,1112,0,80,0,0,0,80,10,0,10,,,,2015-01-31 08:00,2015-02-10 16:00,,2014-08-11 08:00,2014-08-21 16:00,2014-08-11 08:00,2014-08-21 16:00,2014-08-11 08:00,2014-08-21 16:00,2015-01-31 08:00,2015-02-10 16:00,,PT_Normal,,,,,lpSoOLyyj0OSWRCm1Pf6ZQ,,,,N,0,0,,,2014-04-05 12:27,2014-04-05 13:21,admin,admin,
1241,140984,1749,35812,642,0,N,N,N,CP_Drtn,TT_Task,DT_FixedDUR2,TK_NotStart,ENG-FC-SUB-BL31050,4th to 10th Floor,,1112,0,80,0,0,0,80,10,0,10,,,,2015-02-11 08:00,2015-02-22 16:00,,2014-08-23 08:00,2014-09-02 16:00,2014-08-23 08:00,2014-09-02 16:00,2014-08-23 08:00,2014-09-02 16:00,2015-02-11 08:00,2015-02-22 16:00,,PT_Normal,,,,,Te/n/y/UJUaiNJva8akgVQ,,,,N,0,0,,,2014-04-05 12:27,2014-04-05 13:21,admin,admin,
1242,140985,1749,35854,642,0,N,N,N,CP_Drtn,TT_Task,DT_FixedDUR2,TK_NotStart,ENG-FC-APP-BL31000,Ground Floor,,888,0,112,0,0,0,112,14,0,14,,,,2014-12-03 08:00,2014-12-18 16:00,,2014-07-07 10:00,2014-08-03 16:00,2014-07-07 10:00,2014-08-03 16:00,2014-07-07 10:00,2014-08-03 16:00,2014-12-03 08:00,2014-12-18 16:00,,PT_Normal,,,,,DkQIywEg/UWCffCGmCC7sQ,WDqFjgIyX0+m01tW14fs2w,,,N,0,0,,,2014-04-05 12:27,2014-04-05 13:21,admin,admin,
1243,140986,1749,35854,642,0,N,N,N,CP_Drtn,TT_Task,DT_FixedDUR2,TK_NotStart,ENG-FC-APP-BL31010,First Floor,,1352,256,112,0,0,0,112,14,0,14,,,,2015-02-23 08:00,2015-03-10 16:00,,2014-07-27 10:00,2014-08-14 16:00,2014-07-27 10:00,2014-08-14 16:00,2014-07-27 10:00,2014-08-14 16:00,2015-02-23 08:00,2015-03-10 16:00,,PT_Normal,,,,,ivv2V1/iekKTGBxmJki/5Q,QuLKDudDxkitGEViLv5VpQ,,,N,0,0,,,2014-04-05 12:27,2014-04-05 13:21,admin,admin,
1244,140987,1749,35854,642,0,N,N,N,CP_Drtn,TT_Task,DT_FixedDUR2,TK_NotStart,ENG-FC-APP-BL31020,2nd Floor,,1272,176,112,0,0,0,112,14,0,14,,,,2015-02-23 08:00,2015-03-10 16:00,,2014-08-11 08:00,2014-08-26 16:00,2014-08-11 08:00,2014-08-26 16:00,2014-08-11 08:00,2014-08-26 16:00,2015-02-23 08:00,2015-03-10 16:00,,PT_Normal,,,,,vPluMYoAo0iLMbtZbmcajg,AihfCLQepUaWAcvFnVrzzw,,,N,0,0,,,2014-04-05 12:27,2014-04-05 13:21,admin,admin,
1245,140988,1749,35854,642,0,N,N,N,CP_Drtn,TT_Task,DT_FixedDUR2,TK_NotStart,ENG-FC-APP-BL31030,Roof Floor,,1832,216,112,0,0,0,112,14,0,14,,,,2015-06-17 08:00,2015-06-30 16:00,,2014-09-15 08:00,2014-09-30 16:00,2014-09-15 08:00,2014-09-30 16:00,2014-09-15 08:00,2014-09-30 16:00,2015-06-17 08:00,2015-06-30 16:00,,PT_Normal,,,,,Q5E4XNuYcEizkQWTOe6aww,q7CHR2OnukiLGnF/sXwPEg,,,N,0,0,,,2014-04-05 12:27,2014-04-05 13:21,admin,admin,
1246,140989,1749,35854,642,0,N,N,N,CP_Drtn,TT_Task,DT_FixedDUR2,TK_NotStart,ENG-FC-APP-BL31040,3rd Floor,,1192,96,112,0,0,0,112,14,0,14,,,,2015-02-23 08:00,2015-03-10 16:00,,2014-08-23 08:00,2014-09-07 16:00,2014-08-23 08:00,2014-09-07 16:00,2014-08-23 08:00,2014-09-07 16:00,2015-02-23 08:00,2015-03-10 16:00,,PT_Normal,,,,,aH8au9CP1kuBpBBq5PTHLA,,,,N,0,0,,,2014-04-05 12:27,2014-04-05 13:21,admin,admin,
1247,140990,1749,35854,642,0,N,N,N,CP_Drtn,TT_Task,DT_FixedDUR2,TK_NotStart,ENG-FC-APP-BL31050,4th to 10th Floor,,1112,16,112,0,0,0,112,14,0,14,,,,2015-02-23 08:00,2015-03-10 16:00,,2014-09-03 08:00,2014-09-18 16:00,2014-09-03 08:00,2014-09-18 16:00,2014-09-03 08:00,2014-09-18 16:00,2015-02-23 08:00,2015-03-10 16:00,,PT_Normal,,,,,ENjmGMgGY0a9LoFcjKyVVw,,,,N,0,0,,,2014-04-05 12:27,2014-04-05 13:21,admin,admin,
1248,140991,1749,35729,642,0,N,N,N,CP_Drtn,TT_Task,DT_FixedDUR2,TK_NotStart,ENG-BW-SUB-BL31000,Ground Floor,,1568,0,40,0,0,0,40,5,0,5,,,,2014-12-09 08:00,2014-12-14 16:00,,2014-03-31 08:00,2014-04-05 16:00,2014-03-31 08:00,2014-04-05 16:00,2014-03-31 08:00,2014-04-05 16:00,2014-12-09 08:00,2014-12-14 16:00,,PT_Normal,,,,,5I8/VG4Dq0OFreNEivFt0g,SLEXZlkJsUOYFVHxczbopQ,,,N,0,0,,,2014-04-05 12:27,2014-04-05 13:21,admin,admin,
1249,140992,1749,35729,642,0,N,N,N,CP_Drtn,TT_Task,DT_FixedDUR2,TK_NotStart,ENG-BW-SUB-BL31010,First Floor,,1848,0,40,0,0,0,40,5,0,5,,,,2015-01-27 08:00,2015-02-01 16:00,,2014-04-06 08:00,2014-04-10 16:00,2014-04-06 08:00,2014-04-10 16:00,2014-04-06 08:00,2014-04-10 16:00,2015-01-27 08:00,2015-02-01 16:00,,PT_Normal,,,,,yhb8kQ+ET0m76tgUxGeA5Q,aS2SuSuXbEW7zzCcQuymuw,,,N,0,0,,,2014-04-05 12:27,2014-04-05 13:21,admin,admin,
1250,140993,1749,35729,642,0,N,N,N,CP_Drtn,TT_Task,DT_FixedDUR2,TK_NotStart,ENG-BW-SUB-BL31020,2nd  Floor,,1696,0,40,0,0,0,40,5,0,5,,,,2015-01-11 08:00,2015-01-15 16:00,,2014-04-12 08:00,2014-04-16 16:00,2014-04-12 08:00,2014-04-16 16:00,2014-04-12 08:00,2014-04-16 16:00,2015-01-11 08:00,2015-01-15 16:00,,PT_Normal,,,,,FxbFSjW3d0e8xoW+N0uvXA,Ep0n21x6dU+pq6vh2hWejw,,,N,0,0,,,2014-04-05 12:27,2014-04-05 13:21,admin,admin,
1251,140994,1749,35729,642,0,N,N,N,CP_Drtn,TT_Task,DT_FixedDUR2,TK_NotStart,ENG-BW-SUB-BL31030,Roof Floor,,1696,0,40,0,0,0,40,5,0,5,,,,2015-01-28 08:00,2015-02-02 16:00,,2014-04-29 08:00,2014-05-05 16:00,2014-04-29 08:00,2014-05-05 16:00,2014-04-29 08:00,2014-05-05 16:00,2015-01-28 08:00,2015-02-02 16:00,,PT_Normal,,,,,plv2eucaIUCa7xt3CwDdkw,Vn8rvXm+9kC2ICtr01kZdw,,,N,0,0,,,2014-04-05 12:27,2014-04-05 13:21,admin,admin,
1252,140995,1749,35729,642,0,N,N,N,CP_Drtn,TT_Task,DT_FixedDUR2,TK_NotStart,ENG-BW-SUB-BL31040,3rd Floor,,1696,0,40,0,0,0,40,5,0,5,,,,2015-01-17 08:00,2015-01-21 16:00,,2014-04-17 08:00,2014-04-22 16:00,2014-04-17 08:00,2014-04-22 16:00,2014-04-17 08:00,2014-04-22 16:00,2015-01-17 08:00,2015-01-21 16:00,,PT_Normal,,,,,25TyfOl42UKeXvbgGvpqGQ,,,,N,0,0,,,2014-04-05 12:27,2014-04-05 13:21,admin,admin,
1253,140996,1749,35729,642,0,N,N,N,CP_Drtn,TT_Task,DT_FixedDUR2,TK_NotStart,ENG-BW-SUB-BL31050,4th to 10th Floor,,1696,0,40,0,0,0,40,5,0,5,,,,2015-01-22 08:00,2015-01-27 16:00,,2014-04-23 08:00,2014-04-28 16:00,2014-04-23 08:00,2014-04-28 16:00,2014-04-23 08:00,2014-04-28 16:00,2015-01-22 08:00,2015-01-27 16:00,,PT_Normal,,,,,rSZ6Wsu4g02MguFCl69WYQ,,,,N,0,0,,,2014-04-05 12:27,2014-04-05 13:21,admin,admin,
1254,140997,1749,35708,642,0,N,N,N,CP_Drtn,TT_Task,DT_FixedDUR2,TK_NotStart,ENG-BW-APP-BL31000,Ground Floor,,1568,176,112,0,0,0,112,14,0,14,,,,2014-12-15 08:00,2014-12-30 16:00,,2014-04-06 08:00,2014-04-21 16:00,2014-04-06 08:00,2014-04-21 16:00,2014-04-06 08:00,2014-04-21 16:00,2014-12-15 08:00,2014-12-30 16:00,,PT_Normal,,,,,Eprtgsb7wkeYdA1WadkYnw,WU79ygUxQE2sBA+c9u3/mw,,,N,0,0,,,2014-04-05 12:27,2014-04-05 13:21,admin,admin,
1255,140998,1749,35708,642,0,N,N,N,CP_Drtn,TT_Task,DT_FixedDUR2,TK_NotStart,ENG-BW-APP-BL31010,First Floor,,1848,448,112,0,0,0,112,14,0,14,,,,2015-02-02 08:00,2015-02-17 16:00,,2014-04-12 08:00,2014-04-27 16:00,2014-04-12 08:00,2014-04-27 16:00,2014-04-12 08:00,2014-04-27 16:00,2015-02-02 08:00,2015-02-17 16:00,,PT_Normal,,,,,MdmdO3yskEmzAQf8SZUziA,/zkQNwihWkKgoQSTX8KOPw,,,N,0,0,,,2014-04-05 12:27,2014-04-05 13:21,admin,admin,
1256,140999,1749,35708,642,0,N,N,N,CP_Drtn,TT_Task,DT_FixedDUR2,TK_NotStart,ENG-BW-APP-BL31020,2nd Floor,,1808,408,112,0,0,0,112,14,0,14,,,,2015-02-02 08:00,2015-02-17 16:00,,2014-04-17 08:00,2014-05-04 16:00,2014-04-17 08:00,2014-05-04 16:00,2014-04-17 08:00,2014-05-04 16:00,2015-02-02 08:00,2015-02-17 16:00,,PT_Normal,,,,,3AWKTw23Zk6SDAInsQzjug,vpLdnsaOEEGC9NdRwg1Y2A,,,N,0,0,,,2014-04-05 12:27,2014-04-05 13:21,admin,admin,
1257,141000,1749,35708,642,0,N,N,N,CP_Drtn,TT_Task,DT_FixedDUR2,TK_NotStart,ENG-BW-APP-BL31030,Roof Floor,,1696,352,112,0,0,0,112,14,0,14,,,,2015-02-03 08:00,2015-02-18 16:00,,2014-05-06 08:00,2014-05-21 16:00,2014-05-06 08:00,2014-05-21 16:00,2014-05-06 08:00,2014-05-21 16:00,2015-02-03 08:00,2015-02-18 16:00,,PT_Normal,,,,,GOqR9CAc3E6LUG4vauDajw,e/+MNZQXIUKmihUJTYyK+g,,,N,0,0,,,2014-04-05 12:27,2014-04-05 13:21,admin,admin,
1258,141001,1749,35708,642,0,N,N,N,CP_Drtn,TT_Task,DT_FixedDUR2,TK_NotStart,ENG-BW-APP-BL31040,3rd Floor,,1768,368,112,0,0,0,112,14,0,14,,,,2015-02-02 08:00,2015-02-17 16:00,,2014-04-23 08:00,2014-05-10 16:00,2014-04-23 08:00,2014-05-10 16:00,2014-04-23 08:00,2014-05-10 16:00,2015-02-02 08:00,2015-02-17 16:00,,PT_Normal,,,,,9WIbXOGtRk6Ou630MxwMaA,,,,N,0,0,,,2014-04-05 12:27,2014-04-05 13:21,admin,admin,
1259,141002,1749,35708,642,0,N,N,N,CP_Drtn,TT_Task,DT_FixedDUR2,TK_NotStart,ENG-BW-APP-BL31050,4th to 10th Floor,,1728,328,112,0,0,0,112,14,0,14,,,,2015-02-02 08:00,2015-02-17 16:00,,2014-04-29 08:00,2014-05-15 16:00,2014-04-29 08:00,2014-05-15 16:00,2014-04-29 08:00,2014-05-15 16:00,2015-02-02 08:00,2015-02-17 16:00,,PT_Normal,,,,,UHZoq2fBk0Gdv0hgzPIRsQ,,,,N,0,0,,,2014-04-05 12:27,2014-04-05 13:21,admin,admin,
1260,141003,1749,35832,642,0,N,N,N,CP_Drtn,TT_Task,DT_FixedDUR2,TK_NotStart,ENG-DS-SUB-BL31000,Roof Floor,,2000,0,80,0,0,0,80,10,0,10,,,,2015-07-07 08:00,2015-07-16 16:00,,2014-09-14 08:00,2014-09-24 16:00,2014-09-14 08:00,2014-09-24 16:00,2014-09-14 08:00,2014-09-24 16:00,2015-07-07 08:00,2015-07-16 16:00,,PT_Normal,,,,,WuS3amiKEU6A70bWv+JcWw,GP+XkrOB4U2xzf0/4URZvQ,,,N,0,0,,,2014-04-05 12:27,2014-04-05 13:21,admin,admin,
1261,141004,1749,35832,642,0,N,N,N,CP_Drtn,TT_Task,DT_FixedDUR2,TK_NotStart,ENG-DS-SUB-BL31010,Ground Floor,,2000,0,80,0,0,0,80,10,0,10,,,,2015-05-16 08:00,2015-05-26 16:00,,2014-07-05 10:00,2014-07-24 14:00,2014-07-05 10:00,2014-07-24 14:00,2014-07-05 10:00,2014-07-24 14:00,2015-05-16 08:00,2015-05-26 16:00,,PT_Normal,,,,,MRzH2E0V6U6Tev+/na8MWA,B6wzw7omFkaV8/yV/Dtafw,,,N,0,0,,,2014-04-05 12:27,2014-04-05 13:21,admin,admin,
1262,141005,1749,35832,642,0,N,N,N,CP_Drtn,TT_Task,DT_FixedDUR2,TK_NotStart,ENG-DS-SUB-BL31020,First Floor,,2000,0,80,0,0,0,80,10,0,10,,,,2015-05-27 08:00,2015-06-06 16:00,,2014-07-25 10:00,2014-08-09 16:00,2014-07-25 10:00,2014-08-09 16:00,2014-07-25 10:00,2014-08-09 16:00,2015-05-27 08:00,2015-06-06 16:00,,PT_Normal,,,,,iGdVEZmxF0yOjJB17lHxzQ,eXVUHKcsmE+N2uUB4L+f/g,,,N,0,0,,,2014-04-05 12:27,2014-04-05 13:21,admin,admin,
1263,141006,1749,35832,642,0,N,N,N,CP_Drtn,TT_Task,DT_FixedDUR2,TK_NotStart,ENG-DS-SUB-BL31030,2nd Floor,,2000,0,80,0,0,0,80,10,0,10,,,,2015-06-07 08:00,2015-06-16 16:00,,2014-08-10 08:00,2014-08-20 16:00,2014-08-10 08:00,2014-08-20 16:00,2014-08-10 08:00,2014-08-20 16:00,2015-06-07 08:00,2015-06-16 16:00,,PT_Normal,,,,,bL2PWM3B10+PnH23M+4Brw,OrgUhusP0kexxqZ6OwPImQ,,,N,0,0,,,2014-04-05 12:27,2014-04-05 13:21,admin,admin,
1264,141007,1749,35832,642,0,N,N,N,CP_Drtn,TT_Task,DT_FixedDUR2,TK_NotStart,ENG-DS-SUB-BL31040,3rd Floor,,2000,0,80,0,0,0,80,10,0,10,,,,2015-06-17 08:00,2015-06-26 16:00,,2014-08-21 08:00,2014-09-01 16:00,2014-08-21 08:00,2014-09-01 16:00,2014-08-21 08:00,2014-09-01 16:00,2015-06-17 08:00,2015-06-26 16:00,,PT_Normal,,,,,0DV0Ix4oRU6BlKKuL9AJMQ,,,,N,0,0,,,2014-04-05 12:27,2014-04-05 13:21,admin,admin,
1265,141008,1749,35832,642,0,N,N,N,CP_Drtn,TT_Task,DT_FixedDUR2,TK_NotStart,ENG-DS-SUB-BL31050,4th to 10th Floor,,2000,0,80,0,0,0,80,10,0,10,,,,2015-06-27 08:00,2015-07-06 16:00,,2014-09-02 08:00,2014-09-13 16:00,2014-09-02 08:00,2014-09-13 16:00,2014-09-02 08:00,2014-09-13 16:00,2015-06-27 08:00,2015-07-06 16:00,,PT_Normal,,,,,5a1wgV5a0Eq3EIrSovAT2g,,,,N,0,0,,,2014-04-05 12:27,2014-04-05 13:21,admin,admin,
1266,141009,1749,35851,642,0,N,N,N,CP_Drtn,TT_Task,DT_FixedDUR2,TK_NotStart,ENG-DS-APP-BL31000,Roof Floor,,2000,1688,112,0,0,0,112,14,0,14,,,,2015-07-17 08:00,2015-07-30 16:00,,2014-09-25 08:00,2014-10-15 16:00,2014-09-25 08:00,2014-10-15 16:00,2014-09-25 08:00,2014-10-15 16:00,2015-07-17 08:00,2015-07-30 16:00,,PT_Normal,,,,,ZNWkdDqlWUSlRUTn2xL8+w,hnSms+8yg06SptxISUOqQg,,,N,0,0,,,2014-04-05 12:27,2014-04-05 13:21,admin,admin,
1267,141010,1749,35851,642,0,N,N,N,CP_Drtn,TT_Task,DT_FixedDUR2,TK_NotStart,ENG-DS-APP-BL31010,Ground Floor,,2400,2088,112,0,0,0,112,14,0,14,,,,2015-07-17 08:00,2015-07-30 16:00,,2014-07-25 10:00,2014-08-13 16:00,2014-07-25 10:00,2014-08-13 16:00,2014-07-25 10:00,2014-08-13 16:00,2015-07-17 08:00,2015-07-30 16:00,,PT_Normal,,,,,yoF3PQFaPUSF41DdJtQMAQ,rvKkhVrc+UG4RYe4yra3AQ,,,N,0,0,,,2014-04-05 12:27,2014-04-05 13:21,admin,admin,
1268,141011,1749,35851,642,0,N,N,N,CP_Drtn,TT_Task,DT_FixedDUR2,TK_NotStart,ENG-DS-APP-BL31020,First Floor,,2320,2008,112,0,0,0,112,14,0,14,,,,2015-07-17 08:00,2015-07-30 16:00,,2014-08-10 08:00,2014-08-25 16:00,2014-08-10 08:00,2014-08-25 16:00,2014-08-10 08:00,2014-08-25 16:00,2015-07-17 08:00,2015-07-30 16:00,,PT_Normal,,,,,pFMz8ITROkim2rk3GwkDSQ,rmiAT8tUJ06JK4/kInvBgg,,,N,0,0,,,2014-04-05 12:27,2014-04-05 13:21,admin,admin,
1269,141012,1749,35851,642,0,N,N,N,CP_Drtn,TT_Task,DT_FixedDUR2,TK_NotStart,ENG-DS-APP-BL31030,2nd Floor,,2240,1928,112,0,0,0,112,14,0,14,,,,2015-07-17 08:00,2015-07-30 16:00,,2014-08-21 08:00,2014-09-06 16:00,2014-08-21 08:00,2014-09-06 16:00,2014-08-21 08:00,2014-09-06 16:00,2015-07-17 08:00,2015-07-30 16:00,,PT_Normal,,,,,IOg2D/kb9Eq+cHtHO7+5lw,6iJP/+pIBEGlw9C5KmjZNA,,,N,0,0,,,2014-04-05 12:27,2014-04-05 13:21,admin,admin,
1270,141013,1749,35851,642,0,N,N,N,CP_Drtn,TT_Task,DT_FixedDUR2,TK_NotStart,ENG-DS-APP-BL31040,3rd Floor,,2160,1848,112,0,0,0,112,14,0,14,,,,2015-07-17 08:00,2015-07-30 16:00,,2014-09-02 08:00,2014-09-17 16:00,2014-09-02 08:00,2014-09-17 16:00,2014-09-02 08:00,2014-09-17 16:00,2015-07-17 08:00,2015-07-30 16:00,,PT_Normal,,,,,HBuHNrkOVkmITCvxH/ixJg,,,,N,0,0,,,2014-04-05 12:27,2014-04-05 13:21,admin,admin,
1271,141014,1749,35851,642,0,N,N,N,CP_Drtn,TT_Task,DT_FixedDUR2,TK_NotStart,ENG-DS-APP-BL31050,4th to 10th Floor,,2080,1768,112,0,0,0,112,14,0,14,,,,2015-07-17 08:00,2015-07-30 16:00,,2014-09-14 08:00,2014-09-29 16:00,2014-09-14 08:00,2014-09-29 16:00,2014-09-14 08:00,2014-09-29 16:00,2015-07-17 08:00,2015-07-30 16:00,,PT_Normal,,,,,fYeqa94N7Ea04kV4ElvkRw,,,,N,0,0,,,2014-04-05 12:27,2014-04-05 13:21,admin,admin,
1272,141015,1749,35880,642,0,N,N,N,CP_Drtn,TT_Task,DT_FixedDUR2,TK_NotStart,ENG-SC-SUB-BL31000,Stair Detail,,2672,0,80,0,0,0,80,10,0,10,,,,2015-06-22 08:00,2015-07-01 16:00,,2014-05-06 08:00,2014-05-17 16:00,2014-05-06 08:00,2014-05-17 16:00,2014-05-06 08:00,2014-05-17 16:00,2015-06-22 08:00,2015-07-01 16:00,,PT_Normal,,,,,90ERY8ZCpEGdve1ZGZd3Ag,fWovInj9VUillfweZ5K9BA,,,N,0,0,,,2014-04-05 12:27,2014-04-05 13:21,admin,admin,
1273,141016,1749,35881,642,0,N,N,N,CP_Drtn,TT_Task,DT_FixedDUR2,TK_NotStart,ENG-SC-APP-BL31000,Stair Detail,,2672,2360,112,0,0,0,112,14,0,14,,,,2015-07-02 08:00,2015-07-15 16:00,,2014-05-18 08:00,2014-06-02 16:00,2014-05-18 08:00,2014-06-02 16:00,2014-05-18 08:00,2014-06-02 16:00,2015-07-02 08:00,2015-07-15 16:00,,PT_Normal,,,,,fSSDFmRtfUibr4SfRxxgZA,JuuoQ4Qr20CnfQALHfUAIA,,,N,0,0,,,2014-04-05 12:27,2014-04-05 13:21,admin,admin,
1274,141017,1749,35896,642,0,N,N,N,CP_Drtn,TT_Task,DT_FixedDUR2,TK_NotStart,ENG-WA-SUB-BL31000,Ground Floor,,1336,0,40,0,0,0,40,5,0,5,,,,2015-01-28 08:00,2015-02-02 16:00,,2014-06-23 08:00,2014-06-28 16:00,2014-06-23 08:00,2014-06-28 16:00,2014-06-23 08:00,2014-06-28 16:00,2015-01-28 08:00,2015-02-02 16:00,,PT_Normal,,,,,xQ6vbcdfzEmcKO8ird4KQw,cBxIhVtmU0mGYBN1CuAEoQ,,,N,0,0,,,2014-04-05 12:27,2014-04-05 13:21,admin,admin,
1275,141018,1749,35896,642,0,N,N,N,CP_Drtn,TT_Task,DT_FixedDUR2,TK_NotStart,ENG-WA-SUB-BL31010,First Floor,,1136,0,40,0,0,0,40,5,0,5,,,,2015-01-05 08:00,2015-01-10 16:00,,2014-06-29 08:00,2014-07-06 14:00,2014-06-29 08:00,2014-07-06 14:00,2014-06-29 08:00,2014-07-06 14:00,2015-01-05 08:00,2015-01-10 16:00,,PT_Normal,,,,,XHPj6glX9EmVPSmzv7Bwvg,geR0RTqd+kC/JqCeYzPDNg,,,N,0,0,,,2014-04-05 12:27,2014-04-05 13:21,admin,admin,
1276,141019,1749,35896,642,0,N,N,N,CP_Drtn,TT_Task,DT_FixedDUR2,TK_NotStart,ENG-WA-SUB-BL31020,2nd Floor,,1136,0,40,0,0,0,40,5,0,5,,,,2015-01-11 08:00,2015-01-15 16:00,,2014-07-07 10:00,2014-07-16 14:00,2014-07-07 10:00,2014-07-16 14:00,2014-07-07 10:00,2014-07-16 14:00,2015-01-11 08:00,2015-01-15 16:00,,PT_Normal,,,,,UcDKeVi200q7IgfG1RlSHg,ZRF9MjS6o02+GmGkKpHn9Q,,,N,0,0,,,2014-04-05 12:27,2014-04-05 13:21,admin,admin,
1277,141020,1749,35896,642,0,N,N,N,CP_Drtn,TT_Task,DT_FixedDUR2,TK_NotStart,ENG-WA-SUB-BL31030,Roof Floor,,1136,0,40,0,0,0,40,5,0,5,,,,2015-01-28 08:00,2015-02-02 16:00,,2014-08-05 08:00,2014-08-10 16:00,2014-08-05 08:00,2014-08-10 16:00,2014-08-05 08:00,2014-08-10 16:00,2015-01-28 08:00,2015-02-02 16:00,,PT_Normal,,,,,zpCWB/ez606nHtNMSOkyuw,naEQln/Bqke4twDxtwjDJQ,,,N,0,0,,,2014-04-05 12:27,2014-04-05 13:21,admin,admin,
1278,141021,1749,35896,642,0,N,N,N,CP_Drtn,TT_Task,DT_FixedDUR2,TK_NotStart,ENG-WA-SUB-BL31040,3rd Floor,,1136,0,40,0,0,0,40,5,0,5,,,,2015-01-17 08:00,2015-01-21 16:00,,2014-07-17 10:00,2014-07-26 14:00,2014-07-17 10:00,2014-07-26 14:00,2014-07-17 10:00,2014-07-26 14:00,2015-01-17 08:00,2015-01-21 16:00,,PT_Normal,,,,,hgl+CKl9W0K7c6TlMpg4gw,,,,N,0,0,,,2014-04-05 12:27,2014-04-05 13:21,admin,admin,
1279,141022,1749,35896,642,0,N,N,N,CP_Drtn,TT_Task,DT_FixedDUR2,TK_NotStart,ENG-WA-SUB-BL31050,4th to 10th Floor,,1136,0,40,0,0,0,40,5,0,5,,,,2015-01-22 08:00,2015-01-27 16:00,,2014-07-27 10:00,2014-08-04 16:00,2014-07-27 10:00,2014-08-04 16:00,2014-07-27 10:00,2014-08-04 16:00,2015-01-22 08:00,2015-01-27 16:00,,PT_Normal,,,,,aMM4tg4Lak+W1/+yEZqI3Q,,,,N,0,0,,,2014-04-05 12:27,2014-04-05 13:21,admin,admin,
1280,141023,1749,35798,642,0,N,N,N,CP_Drtn,TT_Task,DT_FixedDUR2,TK_NotStart,ENG-WA-APP-BL31000,Ground Floor,,1336,1280,112,0,0,0,112,14,0,14,,,,2015-02-03 08:00,2015-02-18 16:00,,2014-06-29 08:00,2014-07-24 14:00,2014-06-29 08:00,2014-07-24 14:00,2014-06-29 08:00,2014-07-24 14:00,2015-02-03 08:00,2015-02-18 16:00,,PT_Normal,,,,,w5LtaHGcHU+8KnOBvDdeGA,fPrRROfuEkOavw4IZBW9gw,,,N,0,0,,,2014-04-05 12:27,2014-04-05 13:21,admin,admin,
1281,141024,1749,35798,642,0,N,N,N,CP_Drtn,TT_Task,DT_FixedDUR2,TK_NotStart,ENG-WA-APP-BL31010,First Floor,,1296,1240,112,0,0,0,112,14,0,14,,,,2015-02-03 08:00,2015-02-18 16:00,,2014-07-07 10:00,2014-08-03 16:00,2014-07-07 10:00,2014-08-03 16:00,2014-07-07 10:00,2014-08-03 16:00,2015-02-03 08:00,2015-02-18 16:00,,PT_Normal,,,,,S77iryowv0u+N0jm2+z9DA,Kn2L0UZZLEWzaHhzDOE6wg,,,N,0,0,,,2014-04-05 12:27,2014-04-05 13:21,admin,admin,
1282,141025,1749,35798,642,0,N,N,N,CP_Drtn,TT_Task,DT_FixedDUR2,TK_NotStart,ENG-WA-APP-BL31020,2nd Floor,,1256,1200,112,0,0,0,112,14,0,14,,,,2015-02-03 08:00,2015-02-18 16:00,,2014-07-17 10:00,2014-08-09 16:00,2014-07-17 10:00,2014-08-09 16:00,2014-07-17 10:00,2014-08-09 16:00,2015-02-03 08:00,2015-02-18 16:00,,PT_Normal,,,,,YOwDR3j3YUeKzqGit9JPew,pAe4T5LfPkycWY3lBO/Vog,,,N,0,0,,,2014-04-05 12:27,2014-04-05 13:21,admin,admin,
1283,141026,1749,35798,642,0,N,N,N,CP_Drtn,TT_Task,DT_FixedDUR2,TK_NotStart,ENG-WA-APP-BL31030,Roof Floor,,1136,1080,112,0,0,0,112,14,0,14,,,,2015-02-03 08:00,2015-02-18 16:00,,2014-08-11 08:00,2014-08-26 16:00,2014-08-11 08:00,2014-08-26 16:00,2014-08-11 08:00,2014-08-26 16:00,2015-02-03 08:00,2015-02-18 16:00,,PT_Normal,,,,,nU9TW8E8d0u/D6QxTjZRdQ,loQajObN6EiffbNoARnL6g,,,N,0,0,,,2014-04-05 12:27,2014-04-05 13:21,admin,admin,
1284,141027,1749,35798,642,0,N,N,N,CP_Drtn,TT_Task,DT_FixedDUR2,TK_NotStart,ENG-WA-APP-BL31040,3rd Floor,,1216,1160,112,0,0,0,112,14,0,14,,,,2015-02-03 08:00,2015-02-18 16:00,,2014-07-27 10:00,2014-08-14 16:00,2014-07-27 10:00,2014-08-14 16:00,2014-07-27 10:00,2014-08-14 16:00,2015-02-03 08:00,2015-02-18 16:00,,PT_Normal,,,,,oDF9jIk1HkSiVHSnI3pmBg,,,,N,0,0,,,2014-04-05 12:27,2014-04-05 13:21,admin,admin,
1285,141028,1749,35798,642,0,N,N,N,CP_Drtn,TT_Task,DT_FixedDUR2,TK_NotStart,ENG-WA-APP-BL31050,4th to 10th Floor,,1176,1120,112,0,0,0,112,14,0,14,,,,2015-02-03 08:00,2015-02-18 16:00,,2014-08-05 08:00,2014-08-20 16:00,2014-08-05 08:00,2014-08-20 16:00,2014-08-05 08:00,2014-08-20 16:00,2015-02-03 08:00,2015-02-18 16:00,,PT_Normal,,,,,6ejg/rD4Jkqsj1Z3Pguwrg,,,,N,0,0,,,2014-04-05 12:27,2014-04-05 13:21,admin,admin,
1286,141029,1749,35700,642,0,N,N,N,CP_Drtn,TT_Task,DT_FixedDUR2,TK_NotStart,ENG-FT-SUB-BL31000,Ground Floor,,2424,0,80,0,0,0,80,10,0,10,,,,2015-06-01 08:00,2015-06-10 16:00,,2014-05-18 08:00,2014-05-28 16:00,2014-05-18 08:00,2014-05-28 16:00,2014-05-18 08:00,2014-05-28 16:00,2015-06-01 08:00,2015-06-10 16:00,,PT_Normal,,,,,2+klOhAxW0uf8wWH6cg8nw,YA+2EXiguEKi7WDcGUkIAw,,,N,0,0,,,2014-04-05 12:27,2014-04-05 13:21,admin,admin,
1287,141030,1749,35700,642,0,N,N,N,CP_Drtn,TT_Task,DT_FixedDUR2,TK_NotStart,ENG-FT-SUB-BL31010,First Floor,,2424,0,80,0,0,0,80,10,0,10,,,,2015-06-11 08:00,2015-06-20 16:00,,2014-05-29 08:00,2014-06-09 16:00,2014-05-29 08:00,2014-06-09 16:00,2014-05-29 08:00,2014-06-09 16:00,2015-06-11 08:00,2015-06-20 16:00,,PT_Normal,,,,,DhN8XHmZi0m4TMLh8EikAw,UAPkWfk8KUu+N0VxQOwFCQ,,,N,0,0,,,2014-04-05 12:27,2014-04-05 13:21,admin,admin,
1288,141031,1749,35700,642,0,N,N,N,CP_Drtn,TT_Task,DT_FixedDUR2,TK_NotStart,ENG-FT-SUB-BL31020,2nd Floor,,2424,0,80,0,0,0,80,10,0,10,,,,2015-06-21 08:00,2015-06-30 16:00,,2014-06-10 08:00,2014-06-22 16:00,2014-06-10 08:00,2014-06-22 16:00,2014-06-10 08:00,2014-06-22 16:00,2015-06-21 08:00,2015-06-30 16:00,,PT_Normal,,,,,DCEg16j+h0yNZdqmxKQVBA,x6iMBeep0E6/UUnTSunQfg,,,N,0,0,,,2014-04-05 12:27,2014-04-05 13:21,admin,admin,
1289,141032,1749,35700,642,0,N,N,N,CP_Drtn,TT_Task,DT_FixedDUR2,TK_NotStart,ENG-FT-SUB-BL31030,3rd Floor,,2424,0,80,0,0,0,80,10,0,10,,,,2015-07-01 08:00,2015-07-10 16:00,,2014-06-23 08:00,2014-07-06 14:00,2014-06-23 08:00,2014-07-06 14:00,2014-06-23 08:00,2014-07-06 14:00,2015-07-01 08:00,2015-07-10 16:00,,PT_Normal,,,,,Av7hFY190k+6ufocXCHwMg,,,,N,0,0,,,2014-04-05 12:27,2014-04-05 13:21,admin,admin,
1290,141033,1749,35700,642,0,N,N,N,CP_Drtn,TT_Task,DT_FixedDUR2,TK_NotStart,ENG-FT-SUB-BL31040,4th to 10th Floor,,2424,0,80,0,0,0,80,10,0,10,,,,2015-07-11 08:00,2015-07-20 16:00,,2014-07-07 10:00,2014-07-26 14:00,2014-07-07 10:00,2014-07-26 14:00,2014-07-07 10:00,2014-07-26 14:00,2015-07-11 08:00,2015-07-20 16:00,,PT_Normal,,,,,Ckz+y9L380iKTVRnKQAzVQ,,,,N,0,0,,,2014-04-05 12:27,2014-04-05 13:21,admin,admin,
1291,141034,1749,35701,642,0,N,N,N,CP_Drtn,TT_Task,DT_FixedDUR2,TK_NotStart,ENG-FT-APP-BL21030,Ground Floor,,2744,2120,112,0,0,0,112,14,0,14,,,,2015-07-21 08:00,2015-08-03 16:00,,2014-05-29 08:00,2014-06-14 16:00,2014-05-29 08:00,2014-06-14 16:00,2014-05-29 08:00,2014-06-14 16:00,2015-07-21 08:00,2015-08-03 16:00,,PT_Normal,,,,,7fbogJ6yEUmG0Nv3bKrZog,ch2dvriQl0WG5NyvH8W0gQ,,,N,0,0,,,2014-04-05 12:27,2014-04-05 13:21,admin,admin,
1292,141035,1749,35701,642,0,N,N,N,CP_Drtn,TT_Task,DT_FixedDUR2,TK_NotStart,ENG-FT-APP-BL21040,First Floor,,2664,2040,112,0,0,0,112,14,0,14,,,,2015-07-21 08:00,2015-08-03 16:00,,2014-06-10 08:00,2014-06-26 16:00,2014-06-10 08:00,2014-06-26 16:00,2014-06-10 08:00,2014-06-26 16:00,2015-07-21 08:00,2015-08-03 16:00,,PT_Normal,,,,,HXz5BwF8PUGz9RI/aKSLjw,NIPA+s7o7Ua8PiKQf3qecA,,,N,0,0,,,2014-04-05 12:27,2014-04-05 13:21,admin,admin,
1293,141036,1749,35701,642,0,N,N,N,CP_Drtn,TT_Task,DT_FixedDUR2,TK_NotStart,ENG-FT-APP-BL21050,2nd Floor,,2584,1960,112,0,0,0,112,14,0,14,,,,2015-07-21 08:00,2015-08-03 16:00,,2014-06-23 08:00,2014-07-14 14:00,2014-06-23 08:00,2014-07-14 14:00,2014-06-23 08:00,2014-07-14 14:00,2015-07-21 08:00,2015-08-03 16:00,,PT_Normal,,,,,a2sgfBAkQEq8u4fUQsI3Zw,8MMBAYWp60Cxr1/2N23mmQ,,,N,0,0,,,2014-04-05 12:27,2014-04-05 13:21,admin,admin,
1294,141037,1749,35701,642,0,N,N,N,CP_Drtn,TT_Task,DT_FixedDUR2,TK_NotStart,ENG-FT-APP-BL21060,3rd Floor,,2504,1880,112,0,0,0,112,14,0,14,,,,2015-07-21 08:00,2015-08-03 16:00,,2014-07-07 10:00,2014-08-03 16:00,2014-07-07 10:00,2014-08-03 16:00,2014-07-07 10:00,2014-08-03 16:00,2015-07-21 08:00,2015-08-03 16:00,,PT_Normal,,,,,MpT70HHwrEuFuv7xZn7CzA,,,,N,0,0,,,2014-04-05 12:27,2014-04-05 13:21,admin,admin,
1295,141038,1749,35701,642,0,N,N,N,CP_Drtn,TT_Task,DT_FixedDUR2,TK_NotStart,ENG-FT-APP-BL21070,4th to 10th Floor,,2424,1800,112,0,0,0,112,14,0,14,,,,2015-07-21 08:00,2015-08-03 16:00,,2014-07-27 10:00,2014-08-14 16:00,2014-07-27 10:00,2014-08-14 16:00,2014-07-27 10:00,2014-08-14 16:00,2015-07-21 08:00,2015-08-03 16:00,,PT_Normal,,,,,+nZnRx1XI0GW8SZpOxoGLQ,,,,N,0,0,,,2014-04-05 12:27,2014-04-05 13:21,admin,admin,
1296,141039,1749,35804,642,0,N,N,N,CP_Drtn,TT_Task,DT_FixedDUR2,TK_NotStart,ENG-FC-APP-BL11000,Ground Floor,,1048,160,112,0,0,0,112,14,0,14,,,,2014-12-03 08:00,2014-12-18 16:00,,2014-06-10 08:00,2014-06-26 16:00,2014-06-10 08:00,2014-06-26 16:00,2014-06-10 08:00,2014-06-26 16:00,2014-12-03 08:00,2014-12-18 16:00,,PT_Normal,,,,,5pv8TJwKUku/RzPyOruCZg,csxJQ7DVPU+r7IHsSoDAlA,,,N,0,0,,,2014-04-05 12:27,2014-04-05 13:21,admin,admin,
1297,141040,1749,35804,642,0,N,N,N,CP_Drtn,TT_Task,DT_FixedDUR2,TK_NotStart,ENG-FC-APP-BL11010,First Floor,,1064,192,112,0,0,0,112,14,0,14,,,,2014-12-17 08:00,2015-01-04 16:00,,2014-06-23 08:00,2014-07-14 14:00,2014-06-23 08:00,2014-07-14 14:00,2014-06-23 08:00,2014-07-14 14:00,2014-12-17 08:00,2015-01-04 16:00,,PT_Normal,,,,,W8xd1MC/c0eOUNKOkbfX3w,/F0qDbm6rE+S/4L3DYi/rQ,,,N,0,0,,,2014-04-05 12:27,2014-04-05 13:21,admin,admin,
1298,141041,1749,35804,642,0,N,N,N,CP_Drtn,TT_Task,DT_FixedDUR2,TK_NotStart,ENG-FC-APP-BL11020,2nd to 6th Floor,,984,112,112,0,0,0,112,14,0,14,,,,2014-12-17 08:00,2015-01-04 16:00,,2014-07-07 10:00,2014-08-03 16:00,2014-07-07 10:00,2014-08-03 16:00,2014-07-07 10:00,2014-08-03 16:00,2014-12-17 08:00,2015-01-04 16:00,,PT_Normal,,,,,NZH3Za/v9EaMbJIaikPwZQ,/Q9DGz21OUG3vNoKEnNoxw,,,N,0,0,,,2014-04-05 12:27,2014-04-05 13:21,admin,admin,
1299,141042,1749,35804,642,0,N,N,N,CP_Drtn,TT_Task,DT_FixedDUR2,TK_NotStart,ENG-FC-APP-BL11030,Roof Floor,,1016,144,112,0,0,0,112,14,0,14,,,,2015-01-05 08:00,2015-01-20 16:00,,2014-07-27 10:00,2014-08-14 16:00,2014-07-27 10:00,2014-08-14 16:00,2014-07-27 10:00,2014-08-14 16:00,2015-01-05 08:00,2015-01-20 16:00,,PT_Normal,,,,,FoVZHHfzh0GKPQGJKSs3uw,wnGyINd1MU6Vte/3mmNv1g,,,N,0,0,,,2014-04-05 12:27,2014-04-05 13:21,admin,admin,
1300,141043,1749,35764,642,0,N,N,N,CP_Drtn,TT_Task,DT_FixedDUR2,TK_NotStart,ENG-FC-SUB-BL11000,Ground Floor,,888,0,80,0,0,0,80,10,0,10,,,,2014-10-27 08:00,2014-11-09 16:00,,2014-05-29 08:00,2014-06-09 16:00,2014-05-29 08:00,2014-06-09 16:00,2014-05-29 08:00,2014-06-09 16:00,2014-10-27 08:00,2014-11-09 16:00,,PT_Normal,,,,,IW1XGom0T0iN7+eETOsBaw,,,,N,0,0,,,2014-04-05 12:27,2014-04-05 13:21,admin,admin,
1301,141044,1749,35764,642,0,N,N,N,CP_Drtn,TT_Task,DT_FixedDUR2,TK_NotStart,ENG-FC-SUB-BL11010,First Floor,,984,0,80,0,0,0,80,10,0,10,,,,2014-11-24 08:00,2014-12-04 16:00,,2014-06-10 08:00,2014-06-22 16:00,2014-06-10 08:00,2014-06-22 16:00,2014-06-10 08:00,2014-06-22 16:00,2014-11-24 08:00,2014-12-04 16:00,,PT_Normal,,,,,kt7ebkOe6EWlbhjEFdR5FQ,,,,N,0,0,,,2014-04-05 12:27,2014-04-05 13:21,admin,admin,
1302,141045,1749,35764,642,0,N,N,N,CP_Drtn,TT_Task,DT_FixedDUR2,TK_NotStart,ENG-FC-SUB-BL11020,2nd to 6th Floor,,984,0,80,0,0,0,80,10,0,10,,,,2014-12-06 08:00,2014-12-16 16:00,,2014-06-23 08:00,2014-07-06 14:00,2014-06-23 08:00,2014-07-06 14:00,2014-06-23 08:00,2014-07-06 14:00,2014-12-06 08:00,2014-12-16 16:00,,PT_Normal,,,,,9rzD2nH8k0yAas3pUBARHQ,,,,N,0,0,,,2014-04-05 12:27,2014-04-05 13:21,admin,admin,
1303,141046,1749,35764,642,0,N,N,N,CP_Drtn,TT_Task,DT_FixedDUR2,TK_NotStart,ENG-FC-SUB-BL11030,Roof Floor,,1016,0,80,0,0,0,80,10,0,10,,,,2014-12-22 08:00,2015-01-04 16:00,,2014-07-07 10:00,2014-07-26 14:00,2014-07-07 10:00,2014-07-26 14:00,2014-07-07 10:00,2014-07-26 14:00,2014-12-22 08:00,2015-01-04 16:00,,PT_Normal,,,,,u0ZJ5EnpUkqD2wya9rme/w,,,,N,0,0,,,2014-04-05 12:27,2014-04-05 13:21,admin,admin,
1304,141047,1749,35726,642,0,N,N,N,CP_Drtn,TT_Task,DT_FixedDUR2,TK_NotStart,ENG-DS-APP-BL11030,Roof Floor,,2348,1608,112,0,0,0,112,14,0,14,,,,2015-07-20 12:00,2015-08-03 12:00,,2014-08-10 08:00,2014-08-25 16:00,2014-08-10 08:00,2014-08-25 16:00,2014-08-10 08:00,2014-08-25 16:00,2015-07-20 12:00,2015-08-03 12:00,,PT_Normal,,,,,P5uj1rVJwE+q4EfL0oT80A,Evg4suGtVEmcccHPbwgLGA,,,N,0,0,,,2014-04-05 12:27,2014-04-05 13:21,admin,admin,
1305,141048,1749,35726,642,0,N,N,N,CP_Drtn,TT_Task,DT_FixedDUR2,TK_NotStart,ENG-DS-APP-BL11000,Ground Floor,,2588,1848,112,0,0,0,112,14,0,14,,,,2015-07-20 12:00,2015-08-03 12:00,,2014-06-22 08:00,2014-07-12 14:00,2014-06-22 08:00,2014-07-12 14:00,2014-06-22 08:00,2014-07-12 14:00,2015-07-20 12:00,2015-08-03 12:00,,PT_Normal,,,,,RZaL6/2ToEaE7gaeU+ErJA,jPLtlpH/b0iexGceZ2Cg0w,,,N,0,0,,,2014-04-05 12:27,2014-04-05 13:21,admin,admin,
1306,141049,1749,35726,642,0,N,N,N,CP_Drtn,TT_Task,DT_FixedDUR2,TK_NotStart,ENG-DS-APP-BL11010,First Floor,,2508,1768,112,0,0,0,112,14,0,14,,,,2015-07-20 12:00,2015-08-03 12:00,,2014-07-05 10:00,2014-08-02 16:00,2014-07-05 10:00,2014-08-02 16:00,2014-07-05 10:00,2014-08-02 16:00,2015-07-20 12:00,2015-08-03 12:00,,PT_Normal,,,,,ypVJSgM6jUCf+Fh4WbGgoQ,XpMI27xyTU2ci5gSh1QscA,,,N,0,0,,,2014-04-05 12:27,2014-04-05 13:21,admin,admin,
1307,141050,1749,35726,642,0,N,N,N,CP_Drtn,TT_Task,DT_FixedDUR2,TK_NotStart,ENG-DS-APP-BL11020,2nd to 6th Floor,,2428,1688,112,0,0,0,112,14,0,14,,,,2015-07-20 12:00,2015-08-03 12:00,,2014-07-25 10:00,2014-08-13 16:00,2014-07-25 10:00,2014-08-13 16:00,2014-07-25 10:00,2014-08-13 16:00,2015-07-20 12:00,2015-08-03 12:00,,PT_Normal,,,,,OjOp0M88n0ufN/Wi3dHV8w,tWj50XgQkUmyKRUdfnbkdA,,,N,0,0,,,2014-04-05 12:27,2014-04-05 13:21,admin,admin,
1308,141051,1749,35790,642,0,N,N,N,CP_Drtn,TT_Task,DT_FixedDUR2,TK_NotStart,ENG-DS-SUB-BL11030,Roof Floor,,1948,0,80,0,0,0,80,10,0,10,,,,2015-05-19 12:00,2015-05-31 12:00,,2014-07-25 10:00,2014-08-09 16:00,2014-07-25 10:00,2014-08-09 16:00,2014-07-25 10:00,2014-08-09 16:00,2015-05-19 12:00,2015-05-31 12:00,,PT_Normal,,,,,dQHB6A6Y3k+ECbZ9rJ2FjA,NyUwC8r3pkCyScfIzSuciQ,,,N,0,0,,,2014-04-05 12:27,2014-04-05 13:21,admin,admin,
1309,141052,1749,35790,642,0,N,N,N,CP_Drtn,TT_Task,DT_FixedDUR2,TK_NotStart,ENG-DS-SUB-BL11000,Ground Floor,,1948,0,80,0,0,0,80,10,0,10,,,,2015-04-14 12:00,2015-04-26 12:00,,2014-06-09 08:00,2014-06-21 16:00,2014-06-09 08:00,2014-06-21 16:00,2014-06-09 08:00,2014-06-21 16:00,2015-04-14 12:00,2015-04-26 12:00,,PT_Normal,,,,,IuZEqIdjbkWANGo6pQ5X/A,,,,N,0,0,,,2014-04-05 12:27,2014-04-05 13:21,admin,admin,
1310,141053,1749,35790,642,0,N,N,N,CP_Drtn,TT_Task,DT_FixedDUR2,TK_NotStart,ENG-DS-SUB-BL11010,First Floor,,1948,0,80,0,0,0,80,10,0,10,,,,2015-04-26 12:00,2015-05-07 12:00,,2014-06-22 08:00,2014-07-04 14:00,2014-06-22 08:00,2014-07-04 14:00,2014-06-22 08:00,2014-07-04 14:00,2015-04-26 12:00,2015-05-07 12:00,,PT_Normal,,,,,/ufr8dQgw0SmH8v2Txk7TA,,,,N,0,0,,,2014-04-05 12:27,2014-04-05 13:21,admin,admin,
1311,141054,1749,35790,642,0,N,N,N,CP_Drtn,TT_Task,DT_FixedDUR2,TK_NotStart,ENG-DS-SUB-BL11020,2nd to 6th Floor,,1948,0,80,0,0,0,80,10,0,10,,,,2015-05-07 12:00,2015-05-19 12:00,,2014-07-05 10:00,2014-07-24 14:00,2014-07-05 10:00,2014-07-24 14:00,2014-07-05 10:00,2014-07-24 14:00,2015-05-07 12:00,2015-05-19 12:00,,PT_Normal,,,,,/OPlkGviGU2X5HJ8g/TiAg,,,,N,0,0,,,2014-04-05 12:27,2014-04-05 13:21,admin,admin,
1312,141055,1749,35710,642,0,N,N,N,CP_Drtn,TT_Task,DT_FixedDUR2,TK_NotStart,ENG-FT-SUB-BL11000,Ground Floor,,2312,0,80,0,0,0,80,10,0,10,,,,2015-04-22 08:00,2015-05-03 16:00,,2014-04-23 08:00,2014-05-05 16:00,2014-04-23 08:00,2014-05-05 16:00,2014-04-23 08:00,2014-05-05 16:00,2015-04-22 08:00,2015-05-03 16:00,,PT_Normal,,,,,BxgpOTqGf02oJImWlhbhvw,b9ui1iG1p0+/p4tbnlkjdg,,,N,0,0,,,2014-04-05 12:27,2014-04-05 13:21,admin,admin,
1313,141056,1749,35710,642,0,N,N,N,CP_Drtn,TT_Task,DT_FixedDUR2,TK_NotStart,ENG-FT-SUB-BL11010,First Floor,,2312,0,80,0,0,0,80,10,0,10,,,,2015-05-04 08:00,2015-05-14 16:00,,2014-05-06 08:00,2014-05-17 16:00,2014-05-06 08:00,2014-05-17 16:00,2014-05-06 08:00,2014-05-17 16:00,2015-05-04 08:00,2015-05-14 16:00,,PT_Normal,,,,,2mlgReU3/EOLKtCTsFukFg,UFJfIE2YMU21bbOr2sKpew,,,N,0,0,,,2014-04-05 12:27,2014-04-05 13:21,admin,admin,
1314,141057,1749,35710,642,0,N,N,N,CP_Drtn,TT_Task,DT_FixedDUR2,TK_NotStart,ENG-FT-SUB-BL11020,2nd to 6th Floor,,2312,0,80,0,0,0,80,10,0,10,,,,2015-05-16 08:00,2015-05-26 16:00,,2014-05-18 08:00,2014-05-28 16:00,2014-05-18 08:00,2014-05-28 16:00,2014-05-18 08:00,2014-05-28 16:00,2015-05-16 08:00,2015-05-26 16:00,,PT_Normal,,,,,KYzQURT/pkOiqM1zI5fERQ,9XnIHT9H3kW+HcK2rM2ZgA,,,N,0,0,,,2014-04-05 12:27,2014-04-05 13:21,admin,admin,
1315,141058,1749,35793,642,0,N,N,N,CP_Drtn,TT_Task,DT_FixedDUR2,TK_NotStart,ENG-FT-APP-BL11000,Ground Floor,,2476,1664,112,0,0,0,112,14,0,14,,,,2015-05-27 12:00,2015-06-11 12:00,,2014-05-06 08:00,2014-05-21 16:00,2014-05-06 08:00,2014-05-21 16:00,2014-05-06 08:00,2014-05-21 16:00,2015-05-27 12:00,2015-06-11 12:00,,PT_Normal,,,,,dNBsbRrKQUq5wMsN9vAjIQ,b9ui1iG1p0+/p4tbnlkjdg,,,N,0,0,,,2014-04-05 12:27,2014-04-05 13:21,admin,admin,
1316,141059,1749,35793,642,0,N,N,N,CP_Drtn,TT_Task,DT_FixedDUR2,TK_NotStart,ENG-FT-APP-BL11010,First Floor,,2396,1584,112,0,0,0,112,14,0,14,,,,2015-05-27 12:00,2015-06-11 12:00,,2014-05-18 08:00,2014-06-02 16:00,2014-05-18 08:00,2014-06-02 16:00,2014-05-18 08:00,2014-06-02 16:00,2015-05-27 12:00,2015-06-11 12:00,,PT_Normal,,,,,NmUfAGhi2EaQykUohsjkCg,UFJfIE2YMU21bbOr2sKpew,,,N,0,0,,,2014-04-05 12:27,2014-04-05 13:21,admin,admin,
1317,141060,1749,35793,642,0,N,N,N,CP_Drtn,TT_Task,DT_FixedDUR2,TK_NotStart,ENG-FT-APP-BL11020,2nd to 6th Floor,,2316,1504,112,0,0,0,112,14,0,14,,,,2015-05-27 12:00,2015-06-11 12:00,,2014-05-29 08:00,2014-06-14 16:00,2014-05-29 08:00,2014-06-14 16:00,2014-05-29 08:00,2014-06-14 16:00,2015-05-27 12:00,2015-06-11 12:00,,PT_Normal,,,,,uInfTpFW6Uy1nBCm4+O6Qg,9XnIHT9H3kW+HcK2rM2ZgA,,,N,0,0,,,2014-04-05 12:27,2014-04-05 13:21,admin,admin,
1318,141061,1749,35813,642,0,N,N,N,CP_Drtn,TT_Task,DT_FixedDUR2,TK_NotStart,ENG-WA-SUB-BL11000,Ground Floor,,1136,0,40,0,0,0,40,5,0,5,,,,2014-12-16 08:00,2014-12-21 16:00,,2014-06-10 08:00,2014-06-15 16:00,2014-06-10 08:00,2014-06-15 16:00,2014-06-10 08:00,2014-06-15 16:00,2014-12-16 08:00,2014-12-21 16:00,,PT_Normal,,,,,2aiHz6qeYEiQCbAxDcQ8jg,csxJQ7DVPU+r7IHsSoDAlA,,,N,0,0,,,2014-04-05 12:27,2014-04-05 13:21,admin,admin,
1319,141062,1749,35813,642,0,N,N,N,CP_Drtn,TT_Task,DT_FixedDUR2,TK_NotStart,ENG-WA-SUB-BL11010,First Floor,,1136,0,40,0,0,0,40,5,0,5,,,,2014-12-22 08:00,2014-12-27 16:00,,2014-06-16 08:00,2014-06-22 16:00,2014-06-16 08:00,2014-06-22 16:00,2014-06-16 08:00,2014-06-22 16:00,2014-12-22 08:00,2014-12-27 16:00,,PT_Normal,,,,,yis5iG+slk+6J341VqvxsA,/F0qDbm6rE+S/4L3DYi/rQ,,,N,0,0,,,2014-04-05 12:27,2014-04-05 13:21,admin,admin,
1320,141063,1749,35813,642,0,N,N,N,CP_Drtn,TT_Task,DT_FixedDUR2,TK_NotStart,ENG-WA-SUB-BL11020,2nd to 6th Floor,,1368,0,40,0,0,0,40,5,0,5,,,,2015-02-02 08:00,2015-02-07 16:00,,2014-06-23 08:00,2014-06-28 16:00,2014-06-23 08:00,2014-06-28 16:00,2014-06-23 08:00,2014-06-28 16:00,2015-02-02 08:00,2015-02-07 16:00,,PT_Normal,,,,,kvRn1M1xskyyK7qZUGSd7g,/Q9DGz21OUG3vNoKEnNoxw,,,N,0,0,,,2014-04-05 12:27,2014-04-05 13:21,admin,admin,
1321,141064,1749,35813,642,0,N,N,N,CP_Drtn,TT_Task,DT_FixedDUR2,TK_NotStart,ENG-WA-SUB-BL11030,Roof Floor,,1368,0,40,0,0,0,40,5,0,5,,,,2015-02-08 08:00,2015-02-12 16:00,,2014-06-29 08:00,2014-07-06 14:00,2014-06-29 08:00,2014-07-06 14:00,2014-06-29 08:00,2014-07-06 14:00,2015-02-08 08:00,2015-02-12 16:00,,PT_Normal,,,,,unvXxtLKS0mP1iCakq+dhw,wnGyINd1MU6Vte/3mmNv1g,,,N,0,0,,,2014-04-05 12:27,2014-04-05 13:21,admin,admin,
1322,141065,1749,35732,642,0,N,N,N,CP_Drtn,TT_Task,DT_FixedDUR2,TK_NotStart,ENG-WA-APP-BL11000,Ground Floor,,1580,768,112,0,0,0,112,14,0,14,,,,2015-02-26 12:00,2015-03-15 12:00,,2014-06-16 08:00,2014-07-04 14:00,2014-06-16 08:00,2014-07-04 14:00,2014-06-16 08:00,2014-07-04 14:00,2015-02-26 12:00,2015-03-15 12:00,,PT_Normal,,,,,yPRD0+dXzUqyK4S1flsuaA,buPnkBvT90aOqagFo/d1DQ,,,N,0,0,,,2014-04-05 12:27,2014-04-05 13:21,admin,admin,
1323,141066,1749,35732,642,0,N,N,N,CP_Drtn,TT_Task,DT_FixedDUR2,TK_NotStart,ENG-WA-APP-BL11010,First Floor,,1540,728,112,0,0,0,112,14,0,14,,,,2015-02-26 12:00,2015-03-15 12:00,,2014-06-23 08:00,2014-07-14 14:00,2014-06-23 08:00,2014-07-14 14:00,2014-06-23 08:00,2014-07-14 14:00,2015-02-26 12:00,2015-03-15 12:00,,PT_Normal,,,,,2s5/QuMdv0C6DeVIoBjI/w,Abpso18O906M1zX8e+cFeg,,,N,0,0,,,2014-04-05 12:27,2014-04-05 13:21,admin,admin,
1324,141067,1749,35732,642,0,N,N,N,CP_Drtn,TT_Task,DT_FixedDUR2,TK_NotStart,ENG-WA-APP-BL11020,2nd to 6th Floor,,1500,688,112,0,0,0,112,14,0,14,,,,2015-02-26 12:00,2015-03-15 12:00,,2014-06-29 08:00,2014-07-24 14:00,2014-06-29 08:00,2014-07-24 14:00,2014-06-29 08:00,2014-07-24 14:00,2015-02-26 12:00,2015-03-15 12:00,,PT_Normal,,,,,o/D8LBCv10WafkS+vUyyDQ,FeZN2lNebEm6gp4hkVNEUg,,,N,0,0,,,2014-04-05 12:27,2014-04-05 13:21,admin,admin,
1325,141068,1749,35732,642,0,N,N,N,CP_Drtn,TT_Task,DT_FixedDUR2,TK_NotStart,ENG-WA-APP-BL11030,Roof Floor,,1460,648,112,0,0,0,112,14,0,14,,,,2015-02-26 12:00,2015-03-15 12:00,,2014-07-07 10:00,2014-08-03 16:00,2014-07-07 10:00,2014-08-03 16:00,2014-07-07 10:00,2014-08-03 16:00,2015-02-26 12:00,2015-03-15 12:00,,PT_Normal,,,,,y5ze7NiHdUeHSbIEnCbzLQ,lUZW5fOHzkO3LrJaHAJGaw,,,N,0,0,,,2014-04-05 12:27,2014-04-05 13:21,admin,admin,
1326,141069,1749,35906,642,0,N,N,N,CP_Drtn,TT_Task,DT_FixedDUR2,TK_NotStart,ENG-BW-APP-BL11000,Ground Floor,,1648,256,112,0,0,0,112,14,0,14,,,,2014-12-15 08:00,2014-12-30 16:00,,2014-03-25 08:00,2014-04-09 16:00,2014-03-25 08:00,2014-04-09 16:00,2014-03-25 08:00,2014-04-09 16:00,2014-12-15 08:00,2014-12-30 16:00,,PT_Normal,,,,,zxhqYbHyek6OcAhm9bRyqw,QeDXYUGt30e1HFQyGIHzxA,,,N,0,0,,,2014-04-05 12:27,2014-04-05 13:21,admin,admin,
1327,141070,1749,35906,642,0,N,N,N,CP_Drtn,TT_Task,DT_FixedDUR2,TK_NotStart,ENG-BW-APP-BL11010,First Floor,,1704,328,112,0,0,0,112,14,0,14,,,,2014-12-29 08:00,2015-01-15 16:00,,2014-03-31 08:00,2014-04-15 16:00,2014-03-31 08:00,2014-04-15 16:00,2014-03-31 08:00,2014-04-15 16:00,2014-12-29 08:00,2015-01-15 16:00,,PT_Normal,,,,,qx5CYheK2UeqTnheCJPMJw,zUvHglnHQ0CeVbuz0z5aBg,,,N,0,0,,,2014-04-05 12:27,2014-04-05 13:21,admin,admin,
1328,141071,1749,35906,642,0,N,N,N,CP_Drtn,TT_Task,DT_FixedDUR2,TK_NotStart,ENG-BW-APP-BL11020,2nd to 6th Floor,,1664,288,112,0,0,0,112,14,0,14,,,,2014-12-29 08:00,2015-01-15 16:00,,2014-04-06 08:00,2014-04-21 16:00,2014-04-06 08:00,2014-04-21 16:00,2014-04-06 08:00,2014-04-21 16:00,2014-12-29 08:00,2015-01-15 16:00,,PT_Normal,,,,,H/yXDGaj9UuZJSb7FflfnA,s4oMG4RX50CwRTdzpRVFtw,,,N,0,0,,,2014-04-05 12:27,2014-04-05 13:21,admin,admin,
1329,141072,1749,35906,642,0,N,N,N,CP_Drtn,TT_Task,DT_FixedDUR2,TK_NotStart,ENG-BW-APP-BL11030,Roof,,2020,512,112,0,0,0,112,14,0,14,,,,2015-02-26 12:00,2015-03-15 12:00,,2014-04-12 08:00,2014-04-27 16:00,2014-04-12 08:00,2014-04-27 16:00,2014-04-12 08:00,2014-04-27 16:00,2015-02-26 12:00,2015-03-15 12:00,,PT_Normal,,,,,pAYQ9vjv0UO6rrh14PA1Kw,IVmzy4BV/UeJEST9Nz1jvQ,,,N,0,0,,,2014-04-05 12:27,2014-04-05 13:21,admin,admin,
1330,141073,1749,35740,642,0,N,N,N,CP_Drtn,TT_Task,DT_FixedDUR2,TK_NotStart,ENG-BW-SUB-BL11000,Ground Floor,,1568,0,40,0,0,0,40,5,0,5,,,,2014-11-27 08:00,2014-12-02 16:00,,2014-03-19 08:00,2014-03-24 16:00,2014-03-19 08:00,2014-03-24 16:00,2014-03-19 08:00,2014-03-24 16:00,2014-11-27 08:00,2014-12-02 16:00,,PT_Normal,,,,,ICB0755EHE2OSR16DIqFJQ,,,,N,0,0,,,2014-04-05 12:27,2014-04-05 13:21,admin,admin,
1331,141074,1749,35740,642,0,N,N,N,CP_Drtn,TT_Task,DT_FixedDUR2,TK_NotStart,ENG-BW-SUB-BL11010,First Floor,,1664,0,40,0,0,0,40,5,0,5,,,,2014-12-17 08:00,2014-12-22 16:00,,2014-03-25 08:00,2014-03-30 16:00,2014-03-25 08:00,2014-03-30 16:00,2014-03-25 08:00,2014-03-30 16:00,2014-12-17 08:00,2014-12-22 16:00,,PT_Normal,,,,,Ji9Gz3HblEuWcpsTsHdpXg,,,,N,0,0,,,2014-04-05 12:27,2014-04-05 13:21,admin,admin,
1332,141075,1749,35740,642,0,N,N,N,CP_Drtn,TT_Task,DT_FixedDUR2,TK_NotStart,ENG-BW-SUB-BL11020,2nd to 6th Floor,,1664,0,40,0,0,0,40,5,0,5,,,,2014-12-23 08:00,2014-12-28 16:00,,2014-03-31 08:00,2014-04-05 16:00,2014-03-31 08:00,2014-04-05 16:00,2014-03-31 08:00,2014-04-05 16:00,2014-12-23 08:00,2014-12-28 16:00,,PT_Normal,,,,,5S9r+ejiUUmJoxaVaJFlQw,,,,N,0,0,,,2014-04-05 12:27,2014-04-05 13:21,admin,admin,
1333,141076,1749,35740,642,0,N,N,N,CP_Drtn,TT_Task,DT_FixedDUR2,TK_NotStart,ENG-BW-SUB-BL11030,Roof,,1928,0,40,0,0,0,40,5,0,5,,,,2015-02-08 08:00,2015-02-12 16:00,,2014-04-06 08:00,2014-04-10 16:00,2014-04-06 08:00,2014-04-10 16:00,2014-04-06 08:00,2014-04-10 16:00,2015-02-08 08:00,2015-02-12 16:00,,PT_Normal,,,,,3QMR0EjtwUuPZ+rX63qmfQ,,,,N,0,0,,,2014-04-05 12:27,2014-04-05 13:21,admin,admin,
1334,141077,1749,35819,642,0,N,N,N,CP_Drtn,TT_Task,DT_FixedDUR2,TK_NotStart,ENG-SC-SUB-BL11000,Stair Detail,,2312,0,80,0,0,0,80,10,0,10,,,,2015-04-11 08:00,2015-04-21 16:00,,2014-04-12 08:00,2014-04-22 16:00,2014-04-12 08:00,2014-04-22 16:00,2014-04-12 08:00,2014-04-22 16:00,2015-04-11 08:00,2015-04-21 16:00,,PT_Normal,,,,,ZLdVHNMYqEa3ISd29p10+Q,,,,N,0,0,,,2014-04-05 12:27,2014-04-05 13:21,admin,admin,
1335,141078,1749,35820,642,0,N,N,N,CP_Drtn,TT_Task,DT_FixedDUR2,TK_NotStart,ENG-SC-APP-BL11000,Stair Detail,,2860,2048,112,0,0,0,112,14,0,14,,,,2015-07-05 12:00,2015-07-19 12:00,,2014-04-23 08:00,2014-05-10 16:00,2014-04-23 08:00,2014-05-10 16:00,2014-04-23 08:00,2014-05-10 16:00,2015-07-05 12:00,2015-07-19 12:00,,PT_Normal,,,,,Z640xh1tQ0SO5NvJCip+ag,,,,N,0,0,,,2014-04-05 12:27,2014-04-05 13:21,admin,admin,
1336,141079,1749,35668,642,0,N,N,N,CP_Drtn,TT_Task,DT_FixedDUR2,TK_NotStart,ENG-STR-SUB1000,SS2 Pile Cap,,80,0,40,0,0,0,40,5,0,5,,,,2014-02-12 08:00,2014-02-17 16:00,,2014-02-01 08:00,2014-02-05 16:00,2014-02-01 08:00,2014-02-05 16:00,2014-02-01 08:00,2014-02-05 16:00,2014-02-12 08:00,2014-02-17 16:00,,PT_Normal,,,,,Hi/A9aBAmEuQCBYuzIU66A,,,,N,0,0,,,2014-04-05 12:27,2014-04-05 13:21,admin,admin,
1337,141080,1749,35668,642,0,N,N,N,CP_Drtn,TT_Task,DT_FixedDUR2,TK_NotStart,ENG-STR-SUB1010,SS2 Raft,,80,0,40,0,0,0,40,5,0,5,,,,2014-02-12 08:00,2014-02-17 16:00,,2014-02-01 08:00,2014-02-05 16:00,2014-02-01 08:00,2014-02-05 16:00,2014-02-01 08:00,2014-02-05 16:00,2014-02-12 08:00,2014-02-17 16:00,,PT_Normal,,,,,te7Bto15jEiPFIIfl6k8sg,,,,N,0,0,,,2014-04-05 12:27,2014-04-05 13:21,admin,admin,
1338,141081,1749,35668,642,0,N,N,N,CP_Drtn,TT_Task,DT_FixedDUR2,TK_NotStart,ENG-STR-SUB1020,SS2 Sump Pit,,1368,0,40,0,0,0,40,5,0,5,,,,2014-09-10 08:00,2014-09-15 16:00,,2014-02-06 08:00,2014-02-11 16:00,2014-02-06 08:00,2014-02-11 16:00,2014-02-06 08:00,2014-02-11 16:00,2014-09-10 08:00,2014-09-15 16:00,,PT_Normal,,,,,0gaQsZlDVEOYXVodTCIA5Q,,,,N,0,0,,,2014-04-05 12:27,2014-04-05 13:21,admin,admin,
1339,141082,1749,35668,642,0,N,N,N,CP_Drtn,TT_Task,DT_FixedDUR2,TK_NotStart,ENG-STR-SUB1030,SS2 to GF Walls,,488,0,40,0,0,0,40,5,0,5,,,,2014-04-19 08:00,2014-04-23 16:00,,2014-02-06 08:00,2014-02-11 16:00,2014-02-06 08:00,2014-02-11 16:00,2014-02-06 08:00,2014-02-11 16:00,2014-04-19 08:00,2014-04-23 16:00,,PT_Normal,,,,,2IXhhGHogk6myngYOrNUVQ,,,,N,0,0,,,2014-04-05 12:27,2014-04-05 13:21,admin,admin,
1340,141083,1749,35668,642,0,N,N,N,CP_Drtn,TT_Task,DT_FixedDUR2,TK_NotStart,ENG-STR-SUB1040,SS2 to GF Columns,,732,0,40,0,0,0,40,5,0,5,,,,2014-05-25 12:00,2014-05-31 12:00,,2014-02-06 08:00,2014-02-11 16:00,2014-02-06 08:00,2014-02-11 16:00,2014-02-06 08:00,2014-02-11 16:00,2014-05-25 12:00,2014-05-31 12:00,,PT_Normal,,,,,y/wsErjFRUOo39aEgPxUpQ,,,,N,0,0,,,2014-04-05 12:27,2014-04-05 13:21,admin,admin,
1341,141084,1749,35668,642,0,N,N,N,CP_Drtn,TT_Task,DT_FixedDUR2,TK_NotStart,ENG-STR-SUB1050,SS2 to GF Stairs,,732,0,40,0,0,0,40,5,0,5,,,,2014-05-25 12:00,2014-05-31 12:00,,2014-02-06 08:00,2014-02-11 16:00,2014-02-06 08:00,2014-02-11 16:00,2014-02-06 08:00,2014-02-11 16:00,2014-05-25 12:00,2014-05-31 12:00,,PT_Normal,,,,,DhDLGTZvgEuoRq9BDqP4xA,,,,N,0,0,,,2014-04-05 12:27,2014-04-05 13:21,admin,admin,
1342,141085,1749,35668,642,0,N,N,N,CP_Drtn,TT_Task,DT_FixedDUR2,TK_NotStart,ENG-STR-SUB1060,SS2 to GF Ramp,,488,0,40,0,0,0,40,5,0,5,,,,2014-04-19 08:00,2014-04-23 16:00,,2014-02-06 08:00,2014-02-11 16:00,2014-02-06 08:00,2014-02-11 16:00,2014-02-06 08:00,2014-02-11 16:00,2014-04-19 08:00,2014-04-23 16:00,,PT_Normal,,,,,kglZpkOtK0OKDDsOaDdg/A,,,,N,0,0,,,2014-04-05 12:27,2014-04-05 13:21,admin,admin,
1343,141086,1749,35668,642,0,N,N,N,CP_Drtn,TT_Task,DT_FixedDUR2,TK_NotStart,ENG-STR-SUB1070,SS1 Slab,,980,0,40,0,0,0,40,5,0,5,,,,2014-07-12 10:00,2014-07-21 14:00,,2014-02-12 08:00,2014-02-17 16:00,2014-02-12 08:00,2014-02-17 16:00,2014-02-12 08:00,2014-02-17 16:00,2014-07-12 10:00,2014-07-21 14:00,,PT_Normal,,,,,NW8OAETVgUaL+NZRacIsMA,,,,N,0,0,,,2014-04-05 12:27,2014-04-05 13:21,admin,admin,
1344,141087,1749,35668,642,0,N,N,N,CP_Drtn,TT_Task,DT_FixedDUR2,TK_NotStart,ENG-STR-SUB1080,SS1 Beams,,980,0,40,0,0,0,40,5,0,5,,,,2014-07-12 10:00,2014-07-21 14:00,,2014-02-12 08:00,2014-02-17 16:00,2014-02-12 08:00,2014-02-17 16:00,2014-02-12 08:00,2014-02-17 16:00,2014-07-12 10:00,2014-07-21 14:00,,PT_Normal,,,,,dAqr4kJ1LEKbThazkMGzLw,,,,N,0,0,,,2014-04-05 12:27,2014-04-05 13:21,admin,admin,
1345,141088,1749,35668,642,0,N,N,N,CP_Drtn,TT_Task,DT_FixedDUR2,TK_NotStart,ENG-STR-SUB1130,GF Slab,,1276,0,40,0,0,0,40,5,0,5,,,,2014-09-08 12:00,2014-09-14 12:00,,2014-02-18 08:00,2014-02-23 16:00,2014-02-18 08:00,2014-02-23 16:00,2014-02-18 08:00,2014-02-23 16:00,2014-09-08 12:00,2014-09-14 12:00,,PT_Normal,,,,,1kB9gFcMqEWYvTh0WdaZGw,HOusPFwwyEukXILc1PXRyA,,,N,0,0,,,2014-04-05 12:27,2014-04-05 13:21,admin,admin,
1346,141089,1749,35668,642,0,N,N,N,CP_Drtn,TT_Task,DT_FixedDUR2,TK_NotStart,ENG-STR-SUB1140,GF Beams,,1276,0,40,0,0,0,40,5,0,5,,,,2014-09-08 12:00,2014-09-14 12:00,,2014-02-18 08:00,2014-02-23 16:00,2014-02-18 08:00,2014-02-23 16:00,2014-02-18 08:00,2014-02-23 16:00,2014-09-08 12:00,2014-09-14 12:00,,PT_Normal,,,,,WyeXaEgdLUCzinXjurASzQ,BOHLnFt49kuo1ouUGP51Dg,,,N,0,0,,,2014-04-05 12:27,2014-04-05 13:21,admin,admin,
1347,141090,1749,35642,642,0,N,N,N,CP_Drtn,TT_Task,DT_FixedDUR2,TK_NotStart,ENG-STR-APP100,SS2 Pile Cap,,80,80,112,0,0,0,112,14,0,14,,,,2014-02-18 08:00,2014-03-05 16:00,,2014-02-06 08:00,2014-02-22 16:00,2014-02-06 08:00,2014-02-22 16:00,2014-02-06 08:00,2014-02-22 16:00,2014-02-18 08:00,2014-03-05 16:00,,PT_Normal,,,,,fk22TXv7aEyCrrjsfzSEuw,FN/x6wDndEmXmROdiPqnGQ,,,N,0,0,,,2014-04-05 12:27,2014-04-05 13:21,admin,admin,
1348,141091,1749,35642,642,0,N,N,N,CP_Drtn,TT_Task,DT_FixedDUR2,TK_NotStart,ENG-STR-APP110,SS2 Raft,,80,0,112,0,0,0,112,14,0,14,,,,2014-02-18 08:00,2014-03-05 16:00,,2014-02-06 08:00,2014-02-22 16:00,2014-02-06 08:00,2014-02-22 16:00,2014-02-06 08:00,2014-02-22 16:00,2014-02-18 08:00,2014-03-05 16:00,,PT_Normal,,,,,+KHtpm0wnkK5MvNCVmpQPg,vkwwSODUWUKTXTCugvWT+w,,,N,0,0,,,2014-04-05 12:27,2014-04-05 13:21,admin,admin,
1349,141092,1749,35642,642,0,N,N,N,CP_Drtn,TT_Task,DT_FixedDUR2,TK_NotStart,ENG-STR-APP120,SS2 Sump Pit,,1368,472,112,0,0,0,112,14,0,14,,,,2014-09-16 08:00,2014-10-01 16:00,,2014-02-12 08:00,2014-02-27 16:00,2014-02-12 08:00,2014-02-27 16:00,2014-02-12 08:00,2014-02-27 16:00,2014-09-16 08:00,2014-10-01 16:00,,PT_Normal,,,,,Bi1pcjlaiE+C4SR8NOBTkw,Tn4Zjwa4z02rpAe89Yhzhg,,,N,0,0,,,2014-04-05 12:27,2014-04-05 13:21,admin,admin,
1350,141093,1749,35642,642,0,N,N,N,CP_Drtn,TT_Task,DT_FixedDUR2,TK_NotStart,ENG-STR-APP130,SS2 to GF Walls,,732,248,112,0,0,0,112,14,0,14,,,,2014-05-31 12:00,2014-06-16 12:00,,2014-02-12 08:00,2014-02-27 16:00,2014-02-12 08:00,2014-02-27 16:00,2014-02-12 08:00,2014-02-27 16:00,2014-05-31 12:00,2014-06-16 12:00,,PT_Normal,,,,,dqycbJ2b+Eqvg7VDbyWRRg,HB56BBTrcEmygYJqrjLyLw,,,N,0,0,,,2014-04-05 12:27,2014-04-05 13:21,admin,admin,
1351,141094,1749,35642,642,0,N,N,N,CP_Drtn,TT_Task,DT_FixedDUR2,TK_NotStart,ENG-STR-APP140,SS2 to GF Columns,,732,248,112,0,0,0,112,14,0,14,,,,2014-05-31 12:00,2014-06-16 12:00,,2014-02-12 08:00,2014-02-27 16:00,2014-02-12 08:00,2014-02-27 16:00,2014-02-12 08:00,2014-02-27 16:00,2014-05-31 12:00,2014-06-16 12:00,,PT_Normal,,,,,RnvU75Q1tEK7VHhAZ/dl3Q,HujxxhrZfkSMoXV6K99m3Q,,,N,0,0,,,2014-04-05 12:27,2014-04-05 13:21,admin,admin,
1352,141095,1749,35642,642,0,N,N,N,CP_Drtn,TT_Task,DT_FixedDUR2,TK_NotStart,ENG-STR-APP150,SS2 to GF Stairs,,732,248,112,0,0,0,112,14,0,14,,,,2014-05-31 12:00,2014-06-16 12:00,,2014-02-12 08:00,2014-02-27 16:00,2014-02-12 08:00,2014-02-27 16:00,2014-02-12 08:00,2014-02-27 16:00,2014-05-31 12:00,2014-06-16 12:00,,PT_Normal,,,,,pnLvwjwohkayfZhb4spEuA,eu3TWKyfi0eYtlIZiySFew,,,N,0,0,,,2014-04-05 12:27,2014-04-05 13:21,admin,admin,
1353,141096,1749,35642,642,0,N,N,N,CP_Drtn,TT_Task,DT_FixedDUR2,TK_NotStart,ENG-STR-APP160,SS2 to GF Ramp,,732,248,112,0,0,0,112,14,0,14,,,,2014-05-31 12:00,2014-06-16 12:00,,2014-02-12 08:00,2014-02-27 16:00,2014-02-12 08:00,2014-02-27 16:00,2014-02-12 08:00,2014-02-27 16:00,2014-05-31 12:00,2014-06-16 12:00,,PT_Normal,,,,,iQcw2ZxAzkOmrgSNUWMXJA,6ekcJ+NWZkCgCEmJDyQs2Q,,,N,0,0,,,2014-04-05 12:27,2014-04-05 13:21,admin,admin,
1354,141097,1749,35642,642,0,N,N,N,CP_Drtn,TT_Task,DT_FixedDUR2,TK_NotStart,ENG-STR-APP170,SS1 Slab,,980,280,112,0,0,0,112,14,0,14,,,,2014-07-22 10:00,2014-08-12 12:00,,2014-02-18 08:00,2014-03-05 16:00,2014-02-18 08:00,2014-03-05 16:00,2014-02-18 08:00,2014-03-05 16:00,2014-07-22 10:00,2014-08-12 12:00,,PT_Normal,,,,,CfVxSyKosU+D8rQ7PRNyYw,HOusPFwwyEukXILc1PXRyA,,,N,0,0,,,2014-04-05 12:27,2014-04-05 13:21,admin,admin,
1355,141098,1749,35642,642,0,N,N,N,CP_Drtn,TT_Task,DT_FixedDUR2,TK_NotStart,ENG-STR-APP180,SS1 Beams,,980,520,112,0,0,0,112,14,0,14,,,,2014-07-22 10:00,2014-08-12 12:00,,2014-02-18 08:00,2014-03-05 16:00,2014-02-18 08:00,2014-03-05 16:00,2014-02-18 08:00,2014-03-05 16:00,2014-07-22 10:00,2014-08-12 12:00,,PT_Normal,,,,,D+8uzfdKz0Wpyy4RChxk1Q,BOHLnFt49kuo1ouUGP51Dg,,,N,0,0,,,2014-04-05 12:27,2014-04-05 13:21,admin,admin,
1356,141099,1749,35642,642,0,N,N,N,CP_Drtn,TT_Task,DT_FixedDUR2,TK_NotStart,ENG-STR-APP230,GF Slab,,1276,816,112,0,0,0,112,14,0,14,,,,2014-09-14 12:00,2014-09-30 12:00,,2014-02-24 08:00,2014-03-11 16:00,2014-02-24 08:00,2014-03-11 16:00,2014-02-24 08:00,2014-03-11 16:00,2014-09-14 12:00,2014-09-30 12:00,,PT_Normal,,,,,IIA0CEbjMUmOERUpDmVyKQ,WB2u2usGPUG6EBN+zm8CaQ,,,N,0,0,,,2014-04-05 12:27,2014-04-05 13:21,admin,admin,
1357,141100,1749,35642,642,0,N,N,N,CP_Drtn,TT_Task,DT_FixedDUR2,TK_NotStart,ENG-STR-APP240,GF Beams,,1276,816,112,0,0,0,112,14,0,14,,,,2014-09-14 12:00,2014-09-30 12:00,,2014-02-24 08:00,2014-03-11 16:00,2014-02-24 08:00,2014-03-11 16:00,2014-02-24 08:00,2014-03-11 16:00,2014-09-14 12:00,2014-09-30 12:00,,PT_Normal,,,,,gT4bjaoMa0m2Lcj5+67hNQ,X0g2qWi030+9AoYESnJiYw,,,N,0,0,,,2014-04-05 12:27,2014-04-05 13:21,admin,admin,
1358,141101,1749,35670,642,0,N,N,N,CP_Drtn,TT_Task,DT_FixedDUR2,TK_NotStart,ENG-STR-BL1-SUB100,SS2 to 1st Walls,,488,0,40,0,0,0,40,5,0,5,,,,2014-04-24 08:00,2014-04-29 16:00,,2014-02-12 08:00,2014-02-17 16:00,2014-02-12 08:00,2014-02-17 16:00,2014-02-12 08:00,2014-02-17 16:00,2014-04-24 08:00,2014-04-29 16:00,,PT_Normal,,,,,3Ovb7tCankmXDv+8cP6DQg,lpUp3zhkKESFlcZyGAHe9g,,,N,0,0,,,2014-04-05 12:27,2014-04-05 13:21,admin,admin,
1359,141102,1749,35670,642,0,N,N,N,CP_Drtn,TT_Task,DT_FixedDUR2,TK_NotStart,ENG-STR-BL1-SUB110,SS2 to 1st  Columns,,488,0,40,0,0,0,40,5,0,5,,,,2014-04-30 08:00,2014-05-06 16:00,,2014-02-18 08:00,2014-02-23 16:00,2014-02-18 08:00,2014-02-23 16:00,2014-02-18 08:00,2014-02-23 16:00,2014-04-30 08:00,2014-05-06 16:00,,PT_Normal,,,,,qYTlVatYg0GpLCzpoajglQ,z/3KzClb2kKfLben1oaBzg,,,N,0,0,,,2014-04-05 12:27,2014-04-05 13:21,admin,admin,
1360,141103,1749,35670,642,0,N,N,N,CP_Drtn,TT_Task,DT_FixedDUR2,TK_NotStart,ENG-STR-BL1-SUB120,SS2 to 1st    Stairs,,488,0,40,0,0,0,40,5,0,5,,,,2014-05-07 08:00,2014-05-12 16:00,,2014-02-24 08:00,2014-03-01 16:00,2014-02-24 08:00,2014-03-01 16:00,2014-02-24 08:00,2014-03-01 16:00,2014-05-07 08:00,2014-05-12 16:00,,PT_Normal,,,,,tTBcMj4ZXk+pdYXS8sk8Jw,PoiOiQjoD0GJ/U/VbBXOfA,,,N,0,0,,,2014-04-05 12:27,2014-04-05 13:21,admin,admin,
1361,141104,1749,35670,642,0,N,N,N,CP_Drtn,TT_Task,DT_FixedDUR2,TK_NotStart,ENG-STR-BL1-SUB130,1st Floor Slab,,488,0,40,0,0,0,40,5,0,5,,,,2014-05-13 08:00,2014-05-18 16:00,,2014-03-02 08:00,2014-03-06 16:00,2014-03-02 08:00,2014-03-06 16:00,2014-03-02 08:00,2014-03-06 16:00,2014-05-13 08:00,2014-05-18 16:00,,PT_Normal,,,,,u35zh/UejkKyEEa8hAIuVg,ItgAbVznYEqC7nhX6/9JPg,,,N,0,0,,,2014-04-05 12:27,2014-04-05 13:21,admin,admin,
1362,141105,1749,35670,642,0,N,N,N,CP_Drtn,TT_Task,DT_FixedDUR2,TK_NotStart,ENG-STR-BL1-SUB140,1st  Beams,,488,0,40,0,0,0,40,5,0,5,,,,2014-05-13 08:00,2014-05-18 16:00,,2014-03-02 08:00,2014-03-06 16:00,2014-03-02 08:00,2014-03-06 16:00,2014-03-02 08:00,2014-03-06 16:00,2014-05-13 08:00,2014-05-18 16:00,,PT_Normal,,,,,xN2XHVq07ESW28uQYIS30A,SHjVCrffaUaWnFVWgeP0nw,,,N,0,0,,,2014-04-05 12:27,2014-04-05 13:21,admin,admin,
1363,141106,1749,35670,642,0,N,N,N,CP_Drtn,TT_Task,DT_FixedDUR2,TK_NotStart,ENG-STR-BL1-SUB150,1st to 4th Walls,,1324,0,40,0,0,0,40,5,0,5,,,,2014-10-02 12:00,2014-10-13 12:00,,2014-03-08 08:00,2014-03-12 16:00,2014-03-08 08:00,2014-03-12 16:00,2014-03-08 08:00,2014-03-12 16:00,2014-10-02 12:00,2014-10-13 12:00,,PT_Normal,,,,,YmgXy6c6wEyAmlSbCFnDkQ,l7c8STb1T0uy0wrpB58FTA,,,N,0,0,,,2014-04-05 12:27,2014-04-05 13:21,admin,admin,
1364,141107,1749,35670,642,0,N,N,N,CP_Drtn,TT_Task,DT_FixedDUR2,TK_NotStart,ENG-STR-BL1-SUB160,1st to 4th   Columns,,1324,0,40,0,0,0,40,5,0,5,,,,2014-10-02 12:00,2014-10-13 12:00,,2014-03-08 08:00,2014-03-12 16:00,2014-03-08 08:00,2014-03-12 16:00,2014-03-08 08:00,2014-03-12 16:00,2014-10-02 12:00,2014-10-13 12:00,,PT_Normal,,,,,3CEosYwMnkuniBWUV11U6w,MfxEMKdFKkGcvVDdsrFNKA,,,N,0,0,,,2014-04-05 12:27,2014-04-05 13:21,admin,admin,
1365,141108,1749,35670,642,0,N,N,N,CP_Drtn,TT_Task,DT_FixedDUR2,TK_NotStart,ENG-STR-BL1-SUB170,1st to 4th    Stairs,,1324,0,40,0,0,0,40,5,0,5,,,,2014-10-02 12:00,2014-10-13 12:00,,2014-03-08 08:00,2014-03-12 16:00,2014-03-08 08:00,2014-03-12 16:00,2014-03-08 08:00,2014-03-12 16:00,2014-10-02 12:00,2014-10-13 12:00,,PT_Normal,,,,,YdJbPUrkFU67eDGZS9YiBQ,Cj79DD3cUUqKoTuInFZPJg,,,N,0,0,,,2014-04-05 12:27,2014-04-05 13:21,admin,admin,
1366,141109,1749,35670,642,0,N,N,N,CP_Drtn,TT_Task,DT_FixedDUR2,TK_NotStart,ENG-STR-BL1-SUB180,2nd Floor Slab,,1596,0,40,0,0,0,40,5,0,5,,,,2014-11-19 12:00,2014-11-25 12:00,,2014-03-08 08:00,2014-03-12 16:00,2014-03-08 08:00,2014-03-12 16:00,2014-03-08 08:00,2014-03-12 16:00,2014-11-19 12:00,2014-11-25 12:00,,PT_Normal,,,,,39QUcxARREKaR6GzBERTtg,qQRtczzMik6ytOZWjMDdEA,,,N,0,0,,,2014-04-05 12:27,2014-04-05 13:21,admin,admin,
1367,141110,1749,35670,642,0,N,N,N,CP_Drtn,TT_Task,DT_FixedDUR2,TK_NotStart,ENG-STR-BL1-SUB190,2nd Floor  Beams,,1596,0,40,0,0,0,40,5,0,5,,,,2014-11-19 12:00,2014-11-25 12:00,,2014-03-08 08:00,2014-03-12 16:00,2014-03-08 08:00,2014-03-12 16:00,2014-03-08 08:00,2014-03-12 16:00,2014-11-19 12:00,2014-11-25 12:00,,PT_Normal,,,,,UfeDw06LFkutuvh7OC8aIQ,da+neOB+y0icj5K35ORK3g,,,N,0,0,,,2014-04-05 12:27,2014-04-05 13:21,admin,admin,
1368,141111,1749,35670,642,0,N,N,N,CP_Drtn,TT_Task,DT_FixedDUR2,TK_NotStart,ENG-STR-BL1-SUB200,3rd Floor Slab,,1828,0,40,0,0,0,40,5,0,5,,,,2014-12-29 12:00,2015-01-06 12:00,,2014-03-13 08:00,2014-03-18 16:00,2014-03-13 08:00,2014-03-18 16:00,2014-03-13 08:00,2014-03-18 16:00,2014-12-29 12:00,2015-01-06 12:00,,PT_Normal,,,,,vVx6npD93063SySWrDpyqw,V/AqTthR00u5fbV3XMkqyQ,,,N,0,0,,,2014-04-05 12:27,2014-04-05 13:21,admin,admin,
1369,141112,1749,35670,642,0,N,N,N,CP_Drtn,TT_Task,DT_FixedDUR2,TK_NotStart,ENG-STR-BL1-SUB210,3rd Floor  Beams,,1828,0,40,0,0,0,40,5,0,5,,,,2014-12-29 12:00,2015-01-06 12:00,,2014-03-13 08:00,2014-03-18 16:00,2014-03-13 08:00,2014-03-18 16:00,2014-03-13 08:00,2014-03-18 16:00,2014-12-29 12:00,2015-01-06 12:00,,PT_Normal,,,,,8haI2Cxltk2FqeDtCdoA5g,XqL338X3JE2uuB/djjPBdQ,,,N,0,0,,,2014-04-05 12:27,2014-04-05 13:21,admin,admin,
1370,141113,1749,35670,642,0,N,N,N,CP_Drtn,TT_Task,DT_FixedDUR2,TK_NotStart,ENG-STR-BL1-SUB220,4th Floor Slab,,1940,0,40,0,0,0,40,5,0,5,,,,2015-01-22 12:00,2015-01-28 12:00,,2014-03-19 08:00,2014-03-24 16:00,2014-03-19 08:00,2014-03-24 16:00,2014-03-19 08:00,2014-03-24 16:00,2015-01-22 12:00,2015-01-28 12:00,,PT_Normal,,,,,dayYBi/tb0OiIv/4skDkig,V/AqTthR00u5fbV3XMkqyQ,,,N,0,0,,,2014-04-05 12:27,2014-04-05 13:21,admin,admin,
1371,141114,1749,35670,642,0,N,N,N,CP_Drtn,TT_Task,DT_FixedDUR2,TK_NotStart,ENG-STR-BL1-SUB230,4th Floor  Beams,,1940,0,40,0,0,0,40,5,0,5,,,,2015-01-22 12:00,2015-01-28 12:00,,2014-03-19 08:00,2014-03-24 16:00,2014-03-19 08:00,2014-03-24 16:00,2014-03-19 08:00,2014-03-24 16:00,2015-01-22 12:00,2015-01-28 12:00,,PT_Normal,,,,,Lc6qfMAxOECwv7pv8vo67w,XqL338X3JE2uuB/djjPBdQ,,,N,0,0,,,2014-04-05 12:27,2014-04-05 13:21,admin,admin,
1372,141115,1749,35670,642,0,N,N,N,CP_Drtn,TT_Task,DT_FixedDUR2,TK_NotStart,ENG-STR-BL1-SUB240,4th to Roof Walls,,1940,0,40,0,0,0,40,5,0,5,,,,2015-01-28 12:00,2015-02-03 12:00,,2014-03-25 08:00,2014-03-30 16:00,2014-03-25 08:00,2014-03-30 16:00,2014-03-25 08:00,2014-03-30 16:00,2015-01-28 12:00,2015-02-03 12:00,,PT_Normal,,,,,BAeFg/fPjkaq7zgPH+NN9g,dE8D2bp+fkim2bnF+nlLHQ,,,N,0,0,,,2014-04-05 12:27,2014-04-05 13:21,admin,admin,
1373,141116,1749,35670,642,0,N,N,N,CP_Drtn,TT_Task,DT_FixedDUR2,TK_NotStart,ENG-STR-BL1-SUB250,4th to Roof  Columns,,1940,0,40,0,0,0,40,5,0,5,,,,2015-01-28 12:00,2015-02-03 12:00,,2014-03-25 08:00,2014-03-30 16:00,2014-03-25 08:00,2014-03-30 16:00,2014-03-25 08:00,2014-03-30 16:00,2015-01-28 12:00,2015-02-03 12:00,,PT_Normal,,,,,2a8/xLHxDEKpveEi/L8+Ww,IluQnXBXd0aqRKFmLa+P8Q,,,N,0,0,,,2014-04-05 12:27,2014-04-05 13:21,admin,admin,
1374,141117,1749,35670,642,0,N,N,N,CP_Drtn,TT_Task,DT_FixedDUR2,TK_NotStart,ENG-STR-BL1-SUB260,4th to Roof Stairs,,1940,0,40,0,0,0,40,5,0,5,,,,2015-01-28 12:00,2015-02-03 12:00,,2014-03-25 08:00,2014-03-30 16:00,2014-03-25 08:00,2014-03-30 16:00,2014-03-25 08:00,2014-03-30 16:00,2015-01-28 12:00,2015-02-03 12:00,,PT_Normal,,,,,pUAiL1pNyU2QzRbwFDJ7EQ,/TnZWmUQPkivxt33iBo/Ew,,,N,0,0,,,2014-04-05 12:27,2014-04-05 13:21,admin,admin,
1375,141118,1749,35670,642,0,N,N,N,CP_Drtn,TT_Task,DT_FixedDUR2,TK_NotStart,ENG-STR-BL1-SUB270,5th Floor Slab,,2132,0,40,0,0,0,40,5,0,5,,,,2015-02-25 12:00,2015-03-03 12:00,,2014-03-25 08:00,2014-03-30 16:00,2014-03-25 08:00,2014-03-30 16:00,2014-03-25 08:00,2014-03-30 16:00,2015-02-25 12:00,2015-03-03 12:00,,PT_Normal,,,,,6c5lZR0yKkeI+VFI/2uOwg,f9aEXLtNPE2u1KqrF1J0hg,,,N,0,0,,,2014-04-05 12:27,2014-04-05 13:21,admin,admin,
1376,141119,1749,35670,642,0,N,N,N,CP_Drtn,TT_Task,DT_FixedDUR2,TK_NotStart,ENG-STR-BL1-SUB280,5th Floor  Beams,,2132,0,40,0,0,0,40,5,0,5,,,,2015-02-25 12:00,2015-03-03 12:00,,2014-03-25 08:00,2014-03-30 16:00,2014-03-25 08:00,2014-03-30 16:00,2014-03-25 08:00,2014-03-30 16:00,2015-02-25 12:00,2015-03-03 12:00,,PT_Normal,,,,,u7kmOZpl3Eq/+YvSW4m2Ow,exX9iaySEU2N0Buru4Lkjg,,,N,0,0,,,2014-04-05 12:27,2014-04-05 13:21,admin,admin,
1377,141120,1749,35670,642,0,N,N,N,CP_Drtn,TT_Task,DT_FixedDUR2,TK_NotStart,ENG-STR-BL1-SUB290,6th Floor Slab,,2284,0,40,0,0,0,40,5,0,5,,,,2015-03-25 12:00,2015-03-31 12:00,,2014-03-31 08:00,2014-04-05 16:00,2014-03-31 08:00,2014-04-05 16:00,2014-03-31 08:00,2014-04-05 16:00,2015-03-25 12:00,2015-03-31 12:00,,PT_Normal,,,,,SRA9sqOGWUm7jq4GUuVY4g,f9aEXLtNPE2u1KqrF1J0hg,,,N,0,0,,,2014-04-05 12:27,2014-04-05 13:21,admin,admin,
1378,141121,1749,35670,642,0,N,N,N,CP_Drtn,TT_Task,DT_FixedDUR2,TK_NotStart,ENG-STR-BL1-SUB300,6th Floor  Beams,,2284,0,40,0,0,0,40,5,0,5,,,,2015-03-25 12:00,2015-03-31 12:00,,2014-03-31 08:00,2014-04-05 16:00,2014-03-31 08:00,2014-04-05 16:00,2014-03-31 08:00,2014-04-05 16:00,2015-03-25 12:00,2015-03-31 12:00,,PT_Normal,,,,,Pmt1+BnN1UeE+aK/NHWy6w,exX9iaySEU2N0Buru4Lkjg,,,N,0,0,,,2014-04-05 12:27,2014-04-05 13:21,admin,admin,
1379,141122,1749,35670,642,0,N,N,N,CP_Drtn,TT_Task,DT_FixedDUR2,TK_NotStart,ENG-STR-BL1-SUB310,7th Floor Slab,,2388,0,40,0,0,0,40,5,0,5,,,,2015-04-15 12:00,2015-04-21 12:00,,2014-04-06 08:00,2014-04-10 16:00,2014-04-06 08:00,2014-04-10 16:00,2014-04-06 08:00,2014-04-10 16:00,2015-04-15 12:00,2015-04-21 12:00,,PT_Normal,,,,,1WsUtcTT3Uq8fBOYDj8wxw,f9aEXLtNPE2u1KqrF1J0hg,,,N,0,0,,,2014-04-05 12:27,2014-04-05 13:21,admin,admin,
1380,141123,1749,35670,642,0,N,N,N,CP_Drtn,TT_Task,DT_FixedDUR2,TK_NotStart,ENG-STR-BL1-SUB320,7th Floor  Beams,,2388,0,40,0,0,0,40,5,0,5,,,,2015-04-15 12:00,2015-04-21 12:00,,2014-04-06 08:00,2014-04-10 16:00,2014-04-06 08:00,2014-04-10 16:00,2014-04-06 08:00,2014-04-10 16:00,2015-04-15 12:00,2015-04-21 12:00,,PT_Normal,,,,,B/5Zwu8p4UWeWpOqO5VGlw,exX9iaySEU2N0Buru4Lkjg,,,N,0,0,,,2014-04-05 12:27,2014-04-05 13:21,admin,admin,
1381,141124,1749,35670,642,0,N,N,N,CP_Drtn,TT_Task,DT_FixedDUR2,TK_NotStart,ENG-STR-BL1-SUB330,Roof Floor Slab,,2388,0,40,0,0,0,40,5,0,5,,,,2015-04-21 12:00,2015-04-27 12:00,,2014-04-12 08:00,2014-04-16 16:00,2014-04-12 08:00,2014-04-16 16:00,2014-04-12 08:00,2014-04-16 16:00,2015-04-21 12:00,2015-04-27 12:00,,PT_Normal,,,,,EeK2Wss9fE2Mx+HhH8p5lQ,f9aEXLtNPE2u1KqrF1J0hg,,,N,0,0,,,2014-04-05 12:27,2014-04-05 13:21,admin,admin,
1382,141125,1749,35670,642,0,N,N,N,CP_Drtn,TT_Task,DT_FixedDUR2,TK_NotStart,ENG-STR-BL1-SUB340,Roof Floor  Beams,,2388,0,40,0,0,0,40,5,0,5,,,,2015-04-21 12:00,2015-04-27 12:00,,2014-04-12 08:00,2014-04-16 16:00,2014-04-12 08:00,2014-04-16 16:00,2014-04-12 08:00,2014-04-16 16:00,2015-04-21 12:00,2015-04-27 12:00,,PT_Normal,,,,,meC7uOc1vkO7hnzFylmQwg,exX9iaySEU2N0Buru4Lkjg,,,N,0,0,,,2014-04-05 12:27,2014-04-05 13:21,admin,admin,
1383,141126,1749,35604,642,0,N,N,N,CP_Drtn,TT_Task,DT_FixedDUR2,TK_NotStart,ENG-STR-BL1-APP100,SS2 to 1st Walls,,692,152,112,0,0,0,112,14,0,14,,,,2014-05-31 12:00,2014-06-16 12:00,,2014-02-18 08:00,2014-03-05 16:00,2014-02-18 08:00,2014-03-05 16:00,2014-02-18 08:00,2014-03-05 16:00,2014-05-31 12:00,2014-06-16 12:00,,PT_Normal,,,,,5rAKIzCs8kilgrXAUPZ37w,l7c8STb1T0uy0wrpB58FTA,,,N,0,0,,,2014-04-05 12:27,2014-04-05 13:21,admin,admin,
1384,141127,1749,35604,642,0,N,N,N,CP_Drtn,TT_Task,DT_FixedDUR2,TK_NotStart,ENG-STR-BL1-APP110,SS2 to 1st Columns,,652,0,112,0,0,0,112,14,0,14,,,,2014-05-31 12:00,2014-06-16 12:00,,2014-02-24 08:00,2014-03-11 16:00,2014-02-24 08:00,2014-03-11 16:00,2014-02-24 08:00,2014-03-11 16:00,2014-05-31 12:00,2014-06-16 12:00,,PT_Normal,,,,,NVeDI6DlP0SHbo3o6iqnzA,MfxEMKdFKkGcvVDdsrFNKA,,,N,0,0,,,2014-04-05 12:27,2014-04-05 13:21,admin,admin,
1385,141128,1749,35604,642,0,N,N,N,CP_Drtn,TT_Task,DT_FixedDUR2,TK_NotStart,ENG-STR-BL1-APP120,SS2 to 1st Stairs,,612,128,112,0,0,0,112,14,0,14,,,,2014-05-31 12:00,2014-06-16 12:00,,2014-03-02 08:00,2014-03-17 16:00,2014-03-02 08:00,2014-03-17 16:00,2014-03-02 08:00,2014-03-17 16:00,2014-05-31 12:00,2014-06-16 12:00,,PT_Normal,,,,,yMO0yVnb/EGdjLXNMSvqhw,Cj79DD3cUUqKoTuInFZPJg,,,N,0,0,,,2014-04-05 12:27,2014-04-05 13:21,admin,admin,
1386,141129,1749,35604,642,0,N,N,N,CP_Drtn,TT_Task,DT_FixedDUR2,TK_NotStart,ENG-STR-BL1-APP130,1st Floor Slab,,1364,904,112,0,0,0,112,14,0,14,,,,2014-10-13 12:00,2014-10-30 12:00,,2014-03-08 08:00,2014-03-23 16:00,2014-03-08 08:00,2014-03-23 16:00,2014-03-08 08:00,2014-03-23 16:00,2014-10-13 12:00,2014-10-30 12:00,,PT_Normal,,,,,uVI6HRAV5UGTCg9GbfSEdg,qQRtczzMik6ytOZWjMDdEA,,,N,0,0,,,2014-04-05 12:27,2014-04-05 13:21,admin,admin,
1387,141130,1749,35604,642,0,N,N,N,CP_Drtn,TT_Task,DT_FixedDUR2,TK_NotStart,ENG-STR-BL1-APP140,1st  Beams,,1364,904,112,0,0,0,112,14,0,14,,,,2014-10-13 12:00,2014-10-30 12:00,,2014-03-08 08:00,2014-03-23 16:00,2014-03-08 08:00,2014-03-23 16:00,2014-03-08 08:00,2014-03-23 16:00,2014-10-13 12:00,2014-10-30 12:00,,PT_Normal,,,,,vkqcfiuXREiBHJxdKTZiXg,da+neOB+y0icj5K35ORK3g,,,N,0,0,,,2014-04-05 12:27,2014-04-05 13:21,admin,admin,
1388,141131,1749,35604,642,0,N,N,N,CP_Drtn,TT_Task,DT_FixedDUR2,TK_NotStart,ENG-STR-BL1-APP150,1st to 4th Walls,,1324,864,112,0,0,0,112,14,0,14,,,,2014-10-13 12:00,2014-10-30 12:00,,2014-03-13 08:00,2014-03-29 16:00,2014-03-13 08:00,2014-03-29 16:00,2014-03-13 08:00,2014-03-29 16:00,2014-10-13 12:00,2014-10-30 12:00,,PT_Normal,,,,,EIqjrpUjVkqpFbvgl2oGmg,dE8D2bp+fkim2bnF+nlLHQ,,,N,0,0,,,2014-04-05 12:27,2014-04-05 13:21,admin,admin,
1389,141132,1749,35604,642,0,N,N,N,CP_Drtn,TT_Task,DT_FixedDUR2,TK_NotStart,ENG-STR-BL1-APP160,1st to 4th   Columns,,1324,864,112,0,0,0,112,14,0,14,,,,2014-10-13 12:00,2014-10-30 12:00,,2014-03-13 08:00,2014-03-29 16:00,2014-03-13 08:00,2014-03-29 16:00,2014-03-13 08:00,2014-03-29 16:00,2014-10-13 12:00,2014-10-30 12:00,,PT_Normal,,,,,T1G9qH3IdkGm24/UKFh1vA,IluQnXBXd0aqRKFmLa+P8Q,,,N,0,0,,,2014-04-05 12:27,2014-04-05 13:21,admin,admin,
1390,141133,1749,35604,642,0,N,N,N,CP_Drtn,TT_Task,DT_FixedDUR2,TK_NotStart,ENG-STR-BL1-APP170,1st to 4th    Stairs,,1324,864,112,0,0,0,112,14,0,14,,,,2014-10-13 12:00,2014-10-30 12:00,,2014-03-13 08:00,2014-03-29 16:00,2014-03-13 08:00,2014-03-29 16:00,2014-03-13 08:00,2014-03-29 16:00,2014-10-13 12:00,2014-10-30 12:00,,PT_Normal,,,,,jvxiN/KCh06m8jvm4O6rBA,/TnZWmUQPkivxt33iBo/Ew,,,N,0,0,,,2014-04-05 12:27,2014-04-05 13:21,admin,admin,
1391,141134,1749,35604,642,0,N,N,N,CP_Drtn,TT_Task,DT_FixedDUR2,TK_NotStart,ENG-STR-BL1-APP180,2nd Floor Slab,,1596,1136,112,0,0,0,112,14,0,14,,,,2014-11-25 12:00,2014-12-11 12:00,,2014-03-13 08:00,2014-03-29 16:00,2014-03-13 08:00,2014-03-29 16:00,2014-03-13 08:00,2014-03-29 16:00,2014-11-25 12:00,2014-12-11 12:00,,PT_Normal,,,,,WkhBMXN+406ArFmRdEMYqA,V/AqTthR00u5fbV3XMkqyQ,,,N,0,0,,,2014-04-05 12:27,2014-04-05 13:21,admin,admin,
1392,141135,1749,35604,642,0,N,N,N,CP_Drtn,TT_Task,DT_FixedDUR2,TK_NotStart,ENG-STR-BL1-APP190,2nd Floor  Beams,,1596,1136,112,0,0,0,112,14,0,14,,,,2014-11-25 12:00,2014-12-11 12:00,,2014-03-13 08:00,2014-03-29 16:00,2014-03-13 08:00,2014-03-29 16:00,2014-03-13 08:00,2014-03-29 16:00,2014-11-25 12:00,2014-12-11 12:00,,PT_Normal,,,,,uhjbRfvuZUGQxChaAK9LQA,XqL338X3JE2uuB/djjPBdQ,,,N,0,0,,,2014-04-05 12:27,2014-04-05 13:21,admin,admin,
1393,141136,1749,35604,642,0,N,N,N,CP_Drtn,TT_Task,DT_FixedDUR2,TK_NotStart,ENG-STR-BL1-APP200,3rd Floor Slab,,1828,1368,112,0,0,0,112,14,0,14,,,,2015-01-06 12:00,2015-01-22 12:00,,2014-03-19 08:00,2014-04-03 16:00,2014-03-19 08:00,2014-04-03 16:00,2014-03-19 08:00,2014-04-03 16:00,2015-01-06 12:00,2015-01-22 12:00,,PT_Normal,,,,,56JAwQoVLEWa2FV2HLS+xA,f9aEXLtNPE2u1KqrF1J0hg,,,N,0,0,,,2014-04-05 12:27,2014-04-05 13:21,admin,admin,
1394,141137,1749,35604,642,0,N,N,N,CP_Drtn,TT_Task,DT_FixedDUR2,TK_NotStart,ENG-STR-BL1-APP210,3rd Floor  Beams,,1828,1368,112,0,0,0,112,14,0,14,,,,2015-01-06 12:00,2015-01-22 12:00,,2014-03-19 08:00,2014-04-03 16:00,2014-03-19 08:00,2014-04-03 16:00,2014-03-19 08:00,2014-04-03 16:00,2015-01-06 12:00,2015-01-22 12:00,,PT_Normal,,,,,dyn2vDiQzEyQlTChTh07IA,exX9iaySEU2N0Buru4Lkjg,,,N,0,0,,,2014-04-05 12:27,2014-04-05 13:21,admin,admin,
1395,141138,1749,35604,642,0,N,N,N,CP_Drtn,TT_Task,DT_FixedDUR2,TK_NotStart,ENG-STR-BL1-APP220,4th Floor Slab,,1980,1520,112,0,0,0,112,14,0,14,,,,2015-02-03 12:00,2015-02-19 12:00,,2014-03-25 08:00,2014-04-09 16:00,2014-03-25 08:00,2014-04-09 16:00,2014-03-25 08:00,2014-04-09 16:00,2015-02-03 12:00,2015-02-19 12:00,,PT_Normal,,,,,JGmmHZJUD0ulSrU8WXZwSA,DUQhtbtgUk+rw/mvmKoaUA,,,N,0,0,,,2014-04-05 12:27,2014-04-05 13:21,admin,admin,
1396,141139,1749,35604,642,0,N,N,N,CP_Drtn,TT_Task,DT_FixedDUR2,TK_NotStart,ENG-STR-BL1-APP230,4th Floor  Beams,,1980,1520,112,0,0,0,112,14,0,14,,,,2015-02-03 12:00,2015-02-19 12:00,,2014-03-25 08:00,2014-04-09 16:00,2014-03-25 08:00,2014-04-09 16:00,2014-03-25 08:00,2014-04-09 16:00,2015-02-03 12:00,2015-02-19 12:00,,PT_Normal,,,,,XYi5t1bDFUW5q71k0wjL0g,ELr0Q6LO50y9IdQG+tj0Gw,,,N,0,0,,,2014-04-05 12:27,2014-04-05 13:21,admin,admin,
1397,141140,1749,35604,642,0,N,N,N,CP_Drtn,TT_Task,DT_FixedDUR2,TK_NotStart,ENG-STR-BL1-APP240,4th to Roof Walls,,1940,1480,112,0,0,0,112,14,0,14,,,,2015-02-03 12:00,2015-02-19 12:00,,2014-03-31 08:00,2014-04-15 16:00,2014-03-31 08:00,2014-04-15 16:00,2014-03-31 08:00,2014-04-15 16:00,2015-02-03 12:00,2015-02-19 12:00,,PT_Normal,,,,,fYnIH+pNokShBWZhBvrRIw,3PbmsEp7dkKMuNT6qZSNXQ,,,N,0,0,,,2014-04-05 12:27,2014-04-05 13:21,admin,admin,
1398,141141,1749,35604,642,0,N,N,N,CP_Drtn,TT_Task,DT_FixedDUR2,TK_NotStart,ENG-STR-BL1-APP250,4th to Roof  Columns,,1940,1480,112,0,0,0,112,14,0,14,,,,2015-02-03 12:00,2015-02-19 12:00,,2014-03-31 08:00,2014-04-15 16:00,2014-03-31 08:00,2014-04-15 16:00,2014-03-31 08:00,2014-04-15 16:00,2015-02-03 12:00,2015-02-19 12:00,,PT_Normal,,,,,B0ZW9qwANku9vDyy3Ic73A,E7FvfQXh4E+Wj8RK9pbk4w,,,N,0,0,,,2014-04-05 12:27,2014-04-05 13:21,admin,admin,
1399,141142,1749,35604,642,0,N,N,N,CP_Drtn,TT_Task,DT_FixedDUR2,TK_NotStart,ENG-STR-BL1-APP260,4th to Roof Stairs,,1940,1480,112,0,0,0,112,14,0,14,,,,2015-02-03 12:00,2015-02-19 12:00,,2014-03-31 08:00,2014-04-15 16:00,2014-03-31 08:00,2014-04-15 16:00,2014-03-31 08:00,2014-04-15 16:00,2015-02-03 12:00,2015-02-19 12:00,,PT_Normal,,,,,HnPqqXcu606uyGyzyKyHkQ,ycOVG6Q5Kk+lJ+qCpjxg+A,,,N,0,0,,,2014-04-05 12:27,2014-04-05 13:21,admin,admin,
1400,141143,1749,35604,642,0,N,N,N,CP_Drtn,TT_Task,DT_FixedDUR2,TK_NotStart,ENG-STR-BL1-APP270,5th Floor Slab,,2132,1672,112,0,0,0,112,14,0,14,,,,2015-03-03 12:00,2015-03-19 12:00,,2014-03-31 08:00,2014-04-15 16:00,2014-03-31 08:00,2014-04-15 16:00,2014-03-31 08:00,2014-04-15 16:00,2015-03-03 12:00,2015-03-19 12:00,,PT_Normal,,,,,73czBK7tJUeQMlormJXbeg,mpjIcYYZu0elZKZbhDQ8UA,,,N,0,0,,,2014-04-05 12:27,2014-04-05 13:21,admin,admin,
1401,141144,1749,35604,642,0,N,N,N,CP_Drtn,TT_Task,DT_FixedDUR2,TK_NotStart,ENG-STR-BL1-APP280,5th Floor  Beams,,2132,1672,112,0,0,0,112,14,0,14,,,,2015-03-03 12:00,2015-03-19 12:00,,2014-03-31 08:00,2014-04-15 16:00,2014-03-31 08:00,2014-04-15 16:00,2014-03-31 08:00,2014-04-15 16:00,2015-03-03 12:00,2015-03-19 12:00,,PT_Normal,,,,,DwFrfkms9U2K3W9EvJOynQ,hEKHgh29PEuLGYS8nSgZAQ,,,N,0,0,,,2014-04-05 12:27,2014-04-05 13:21,admin,admin,
1402,141145,1749,35604,642,0,N,N,N,CP_Drtn,TT_Task,DT_FixedDUR2,TK_NotStart,ENG-STR-BL1-APP290,6th Floor Slab,,2284,1824,112,0,0,0,112,14,0,14,,,,2015-03-31 12:00,2015-04-16 12:00,,2014-04-06 08:00,2014-04-21 16:00,2014-04-06 08:00,2014-04-21 16:00,2014-04-06 08:00,2014-04-21 16:00,2015-03-31 12:00,2015-04-16 12:00,,PT_Normal,,,,,5sqtF6xa7UiRhkyNDDgPKg,cGt6bbUDFUWH+964IVW5zg,,,N,0,0,,,2014-04-05 12:27,2014-04-05 13:21,admin,admin,
1403,141146,1749,35604,642,0,N,N,N,CP_Drtn,TT_Task,DT_FixedDUR2,TK_NotStart,ENG-STR-BL1-APP300,6th Floor  Beams,,2284,1824,112,0,0,0,112,14,0,14,,,,2015-03-31 12:00,2015-04-16 12:00,,2014-04-06 08:00,2014-04-21 16:00,2014-04-06 08:00,2014-04-21 16:00,2014-04-06 08:00,2014-04-21 16:00,2015-03-31 12:00,2015-04-16 12:00,,PT_Normal,,,,,21RmdcvlMEWpLkQKyw7huQ,mfZR9+K9uUSGEd4J++b5YA,,,N,0,0,,,2014-04-05 12:27,2014-04-05 13:21,admin,admin,
1404,141147,1749,35604,642,0,N,N,N,CP_Drtn,TT_Task,DT_FixedDUR2,TK_NotStart,ENG-STR-BL1-APP310,7th Floor Slab,,2428,1968,112,0,0,0,112,14,0,14,,,,2015-04-27 12:00,2015-05-13 12:00,,2014-04-12 08:00,2014-04-27 16:00,2014-04-12 08:00,2014-04-27 16:00,2014-04-12 08:00,2014-04-27 16:00,2015-04-27 12:00,2015-05-13 12:00,,PT_Normal,,,,,l70z01+VXkGHeCyMe1J6Gg,/BEpyqMuQUSLhgwCkt3nOw,,,N,0,0,,,2014-04-05 12:27,2014-04-05 13:21,admin,admin,
1405,141148,1749,35604,642,0,N,N,N,CP_Drtn,TT_Task,DT_FixedDUR2,TK_NotStart,ENG-STR-BL1-APP320,7th Floor  Beams,,2428,1968,112,0,0,0,112,14,0,14,,,,2015-04-27 12:00,2015-05-13 12:00,,2014-04-12 08:00,2014-04-27 16:00,2014-04-12 08:00,2014-04-27 16:00,2014-04-12 08:00,2014-04-27 16:00,2015-04-27 12:00,2015-05-13 12:00,,PT_Normal,,,,,ZZKS3MsLA0KOA3WyD8XQTg,19BKdPXBoEekVl0Ox1kWtw,,,N,0,0,,,2014-04-05 12:27,2014-04-05 13:21,admin,admin,
1406,141149,1749,35604,642,0,N,N,N,CP_Drtn,TT_Task,DT_FixedDUR2,TK_NotStart,ENG-STR-BL1-APP330,Roof Floor Slab,,2388,1928,112,0,0,0,112,14,0,14,,,,2015-04-27 12:00,2015-05-13 12:00,,2014-04-17 08:00,2014-05-04 16:00,2014-04-17 08:00,2014-05-04 16:00,2014-04-17 08:00,2014-05-04 16:00,2015-04-27 12:00,2015-05-13 12:00,,PT_Normal,,,,,XDZvPl/LYECt3TCZJX2/ng,O2mZnuhUM0mazaB/HubmZg,,,N,0,0,,,2014-04-05 12:27,2014-04-05 13:21,admin,admin,
1407,141150,1749,35604,642,0,N,N,N,CP_Drtn,TT_Task,DT_FixedDUR2,TK_NotStart,ENG-STR-BL1-APP340,Roof Floor  Beams,,2388,1928,112,0,0,0,112,14,0,14,,,,2015-04-27 12:00,2015-05-13 12:00,,2014-04-17 08:00,2014-05-04 16:00,2014-04-17 08:00,2014-05-04 16:00,2014-04-17 08:00,2014-05-04 16:00,2015-04-27 12:00,2015-05-13 12:00,,PT_Normal,,,,,YRZB18LazEaSIOujEgVxJw,5IAZitk+906AswlQXPlBkQ,,,N,0,0,,,2014-04-05 12:27,2014-04-05 13:21,admin,admin,
1408,141151,1749,35667,642,0,N,N,N,CP_Drtn,TT_Task,DT_FixedDUR2,TK_NotStart,ENG-STR-BL2-SUB100,SS2 to 1st Walls,,488,0,40,0,0,0,40,5,0,5,,,,2014-05-19 08:00,2014-05-24 16:00,,2014-03-08 08:00,2014-03-12 16:00,2014-03-08 08:00,2014-03-12 16:00,2014-03-08 08:00,2014-03-12 16:00,2014-05-19 08:00,2014-05-24 16:00,,PT_Normal,,,,,O959GYEAaU+HSFHTqxcr3A,l7c8STb1T0uy0wrpB58FTA,,,N,0,0,,,2014-04-05 12:27,2014-04-05 13:21,admin,admin,
1409,141152,1749,35667,642,0,N,N,N,CP_Drtn,TT_Task,DT_FixedDUR2,TK_NotStart,ENG-STR-BL2-SUB110,SS2 to 1st  Columns,,488,0,40,0,0,0,40,5,0,5,,,,2014-05-25 08:00,2014-05-29 16:00,,2014-03-13 08:00,2014-03-18 16:00,2014-03-13 08:00,2014-03-18 16:00,2014-03-13 08:00,2014-03-18 16:00,2014-05-25 08:00,2014-05-29 16:00,,PT_Normal,,,,,PI4aKYZdmE6BN777/y+Jbg,MfxEMKdFKkGcvVDdsrFNKA,,,N,0,0,,,2014-04-05 12:27,2014-04-05 13:21,admin,admin,
1410,141153,1749,35667,642,0,N,N,N,CP_Drtn,TT_Task,DT_FixedDUR2,TK_NotStart,ENG-STR-BL2-SUB120,SS2 to 1st Stairs,,488,0,40,0,0,0,40,5,0,5,,,,2014-05-31 08:00,2014-06-04 16:00,,2014-03-19 08:00,2014-03-24 16:00,2014-03-19 08:00,2014-03-24 16:00,2014-03-19 08:00,2014-03-24 16:00,2014-05-31 08:00,2014-06-04 16:00,,PT_Normal,,,,,oj8n3gYvqkq1EeveWegZYQ,Cj79DD3cUUqKoTuInFZPJg,,,N,0,0,,,2014-04-05 12:27,2014-04-05 13:21,admin,admin,
1411,141154,1749,35667,642,0,N,N,N,CP_Drtn,TT_Task,DT_FixedDUR2,TK_NotStart,ENG-STR-BL2-SUB130,1st Floor Slab,,1160,0,40,0,0,0,40,5,0,5,,,,2014-09-27 08:00,2014-10-01 16:00,,2014-03-25 08:00,2014-03-30 16:00,2014-03-25 08:00,2014-03-30 16:00,2014-03-25 08:00,2014-03-30 16:00,2014-09-27 08:00,2014-10-01 16:00,,PT_Normal,,,,,ppptceDs1EqzhCM1teGMQw,qQRtczzMik6ytOZWjMDdEA,,,N,0,0,,,2014-04-05 12:27,2014-04-05 13:21,admin,admin,
1412,141155,1749,35667,642,0,N,N,N,CP_Drtn,TT_Task,DT_FixedDUR2,TK_NotStart,ENG-STR-BL2-SUB140,1st  Beams,,1160,0,40,0,0,0,40,5,0,5,,,,2014-09-27 08:00,2014-10-01 16:00,,2014-03-25 08:00,2014-03-30 16:00,2014-03-25 08:00,2014-03-30 16:00,2014-03-25 08:00,2014-03-30 16:00,2014-09-27 08:00,2014-10-01 16:00,,PT_Normal,,,,,wCeBWWyOrUG/7Io+xPCS0w,da+neOB+y0icj5K35ORK3g,,,N,0,0,,,2014-04-05 12:27,2014-04-05 13:21,admin,admin,
1413,141156,1749,35667,642,0,N,N,N,CP_Drtn,TT_Task,DT_FixedDUR2,TK_NotStart,ENG-STR-BL2-SUB150,1st to 4th Walls,,1160,0,40,0,0,0,40,5,0,5,,,,2014-09-27 08:00,2014-10-01 16:00,,2014-03-25 08:00,2014-03-30 16:00,2014-03-25 08:00,2014-03-30 16:00,2014-03-25 08:00,2014-03-30 16:00,2014-09-27 08:00,2014-10-01 16:00,,PT_Normal,,,,,SBfiz0ChwUKVM81yW7Ts1Q,dE8D2bp+fkim2bnF+nlLHQ,,,N,0,0,,,2014-04-05 12:27,2014-04-05 13:21,admin,admin,
1414,141157,1749,35667,642,0,N,N,N,CP_Drtn,TT_Task,DT_FixedDUR2,TK_NotStart,ENG-STR-BL2-SUB160,1st to 4th Columns,,1160,0,40,0,0,0,40,5,0,5,,,,2014-09-27 08:00,2014-10-01 16:00,,2014-03-25 08:00,2014-03-30 16:00,2014-03-25 08:00,2014-03-30 16:00,2014-03-25 08:00,2014-03-30 16:00,2014-09-27 08:00,2014-10-01 16:00,,PT_Normal,,,,,qxk7Wg4sOE+4ZyXg7zGlkA,IluQnXBXd0aqRKFmLa+P8Q,,,N,0,0,,,2014-04-05 12:27,2014-04-05 13:21,admin,admin,
1415,141158,1749,35667,642,0,N,N,N,CP_Drtn,TT_Task,DT_FixedDUR2,TK_NotStart,ENG-STR-BL2-SUB170,1st to 4th Stairs,,1160,0,40,0,0,0,40,5,0,5,,,,2014-09-27 08:00,2014-10-01 16:00,,2014-03-25 08:00,2014-03-30 16:00,2014-03-25 08:00,2014-03-30 16:00,2014-03-25 08:00,2014-03-30 16:00,2014-09-27 08:00,2014-10-01 16:00,,PT_Normal,,,,,JYWfQZ+8N0yHceLgVbXw/A,/TnZWmUQPkivxt33iBo/Ew,,,N,0,0,,,2014-04-05 12:27,2014-04-05 13:21,admin,admin,
1416,141159,1749,35667,642,0,N,N,N,CP_Drtn,TT_Task,DT_FixedDUR2,TK_NotStart,ENG-STR-BL2-SUB180,2nd Floor Slab,,1408,0,40,0,0,0,40,5,0,5,,,,2014-11-16 08:00,2014-11-20 16:00,,2014-03-31 08:00,2014-04-05 16:00,2014-03-31 08:00,2014-04-05 16:00,2014-03-31 08:00,2014-04-05 16:00,2014-11-16 08:00,2014-11-20 16:00,,PT_Normal,,,,,MSiEh0ErpUCe/fnzK7kS+Q,V/AqTthR00u5fbV3XMkqyQ,,,N,0,0,,,2014-04-05 12:27,2014-04-05 13:21,admin,admin,
1417,141160,1749,35667,642,0,N,N,N,CP_Drtn,TT_Task,DT_FixedDUR2,TK_NotStart,ENG-STR-BL2-SUB190,2nd Floor  Beams,,1408,0,40,0,0,0,40,5,0,5,,,,2014-11-16 08:00,2014-11-20 16:00,,2014-03-31 08:00,2014-04-05 16:00,2014-03-31 08:00,2014-04-05 16:00,2014-03-31 08:00,2014-04-05 16:00,2014-11-16 08:00,2014-11-20 16:00,,PT_Normal,,,,,h2SRJKRDskqFtga3Twj/sw,XqL338X3JE2uuB/djjPBdQ,,,N,0,0,,,2014-04-05 12:27,2014-04-05 13:21,admin,admin,
1418,141161,1749,35667,642,0,N,N,N,CP_Drtn,TT_Task,DT_FixedDUR2,TK_NotStart,ENG-STR-BL2-SUB200,3rd Floor Slab,,1640,0,40,0,0,0,40,5,0,5,,,,2014-12-25 08:00,2014-12-30 16:00,,2014-04-06 08:00,2014-04-10 16:00,2014-04-06 08:00,2014-04-10 16:00,2014-04-06 08:00,2014-04-10 16:00,2014-12-25 08:00,2014-12-30 16:00,,PT_Normal,,,,,lAU6RaJvhk+FY+gbr8NFpA,f9aEXLtNPE2u1KqrF1J0hg,,,N,0,0,,,2014-04-05 12:27,2014-04-05 13:21,admin,admin,
1419,141162,1749,35667,642,0,N,N,N,CP_Drtn,TT_Task,DT_FixedDUR2,TK_NotStart,ENG-STR-BL2-SUB210,3rd Floor  Beams,,1640,0,40,0,0,0,40,5,0,5,,,,2014-12-25 08:00,2014-12-30 16:00,,2014-04-06 08:00,2014-04-10 16:00,2014-04-06 08:00,2014-04-10 16:00,2014-04-06 08:00,2014-04-10 16:00,2014-12-25 08:00,2014-12-30 16:00,,PT_Normal,,,,,TNjrPq6Ml0+j4AWnBpCT0A,exX9iaySEU2N0Buru4Lkjg,,,N,0,0,,,2014-04-05 12:27,2014-04-05 13:21,admin,admin,
1420,141163,1749,35667,642,0,N,N,N,CP_Drtn,TT_Task,DT_FixedDUR2,TK_NotStart,ENG-STR-BL2-SUB220,4th Floor Slab,,1800,0,40,0,0,0,40,5,0,5,,,,2015-01-26 08:00,2015-01-31 16:00,,2014-04-12 08:00,2014-04-16 16:00,2014-04-12 08:00,2014-04-16 16:00,2014-04-12 08:00,2014-04-16 16:00,2015-01-26 08:00,2015-01-31 16:00,,PT_Normal,,,,,iC0NXKboSkmwOo0QaGbhuA,DUQhtbtgUk+rw/mvmKoaUA,,,N,0,0,,,2014-04-05 12:27,2014-04-05 13:21,admin,admin,
1421,141164,1749,35667,642,0,N,N,N,CP_Drtn,TT_Task,DT_FixedDUR2,TK_NotStart,ENG-STR-BL2-SUB230,4th Floor  Beams,,1800,0,40,0,0,0,40,5,0,5,,,,2015-01-26 08:00,2015-01-31 16:00,,2014-04-12 08:00,2014-04-16 16:00,2014-04-12 08:00,2014-04-16 16:00,2014-04-12 08:00,2014-04-16 16:00,2015-01-26 08:00,2015-01-31 16:00,,PT_Normal,,,,,CIVNphrluEiUJIhfIal6fQ,ELr0Q6LO50y9IdQG+tj0Gw,,,N,0,0,,,2014-04-05 12:27,2014-04-05 13:21,admin,admin,
1422,141165,1749,35667,642,0,N,N,N,CP_Drtn,TT_Task,DT_FixedDUR2,TK_NotStart,ENG-STR-BL2-SUB240,4th to Roof Walls,,1880,0,40,0,0,0,40,5,0,5,,,,2015-01-26 08:00,2015-01-31 16:00,,2014-03-31 08:00,2014-04-05 16:00,2014-03-31 08:00,2014-04-05 16:00,2014-03-31 08:00,2014-04-05 16:00,2015-01-26 08:00,2015-01-31 16:00,,PT_Normal,,,,,Yvs7HyfO9k6TVjiJ43ndog,3PbmsEp7dkKMuNT6qZSNXQ,,,N,0,0,,,2014-04-05 12:27,2014-04-05 13:21,admin,admin,
1423,141166,1749,35667,642,0,N,N,N,CP_Drtn,TT_Task,DT_FixedDUR2,TK_NotStart,ENG-STR-BL2-SUB250,4th to Roof  Columns,,1880,0,40,0,0,0,40,5,0,5,,,,2015-01-26 08:00,2015-01-31 16:00,,2014-03-31 08:00,2014-04-05 16:00,2014-03-31 08:00,2014-04-05 16:00,2014-03-31 08:00,2014-04-05 16:00,2015-01-26 08:00,2015-01-31 16:00,,PT_Normal,,,,,YuWm08JycUef19+CKlLiAQ,E7FvfQXh4E+Wj8RK9pbk4w,,,N,0,0,,,2014-04-05 12:27,2014-04-05 13:21,admin,admin,
1424,141167,1749,35667,642,0,N,N,N,CP_Drtn,TT_Task,DT_FixedDUR2,TK_NotStart,ENG-STR-BL2-SUB260,4th to Roof Stairs,,1880,0,40,0,0,0,40,5,0,5,,,,2015-01-26 08:00,2015-01-31 16:00,,2014-03-31 08:00,2014-04-05 16:00,2014-03-31 08:00,2014-04-05 16:00,2014-03-31 08:00,2014-04-05 16:00,2015-01-26 08:00,2015-01-31 16:00,,PT_Normal,,,,,PyKJC/F+Rk2nHV1oXJ8qWg,ycOVG6Q5Kk+lJ+qCpjxg+A,,,N,0,0,,,2014-04-05 12:27,2014-04-05 13:21,admin,admin,
1425,141168,1749,35667,642,0,N,N,N,CP_Drtn,TT_Task,DT_FixedDUR2,TK_NotStart,ENG-STR-BL2-SUB270,5th Floor Slab,,1936,0,40,0,0,0,40,5,0,5,,,,2015-02-21 08:00,2015-02-25 16:00,,2014-04-17 08:00,2014-04-22 16:00,2014-04-17 08:00,2014-04-22 16:00,2014-04-17 08:00,2014-04-22 16:00,2015-02-21 08:00,2015-02-25 16:00,,PT_Normal,,,,,GexKQQ1f0029BivXMk6FGQ,mpjIcYYZu0elZKZbhDQ8UA,,,N,0,0,,,2014-04-05 12:27,2014-04-05 13:21,admin,admin,
1426,141169,1749,35667,642,0,N,N,N,CP_Drtn,TT_Task,DT_FixedDUR2,TK_NotStart,ENG-STR-BL2-SUB280,5th Floor  Beams,,1936,0,40,0,0,0,40,5,0,5,,,,2015-02-21 08:00,2015-02-25 16:00,,2014-04-17 08:00,2014-04-22 16:00,2014-04-17 08:00,2014-04-22 16:00,2014-04-17 08:00,2014-04-22 16:00,2015-02-21 08:00,2015-02-25 16:00,,PT_Normal,,,,,1tE2MvwtyU6uYBziztUAEQ,hEKHgh29PEuLGYS8nSgZAQ,,,N,0,0,,,2014-04-05 12:27,2014-04-05 13:21,admin,admin,
1427,141170,1749,35667,642,0,N,N,N,CP_Drtn,TT_Task,DT_FixedDUR2,TK_NotStart,ENG-STR-BL2-SUB290,6th Floor Slab,,2072,0,40,0,0,0,40,5,0,5,,,,2015-03-18 08:00,2015-03-23 16:00,,2014-04-23 08:00,2014-04-28 16:00,2014-04-23 08:00,2014-04-28 16:00,2014-04-23 08:00,2014-04-28 16:00,2015-03-18 08:00,2015-03-23 16:00,,PT_Normal,,,,,/u5l2w2LNk2VmZZItg1gIw,cGt6bbUDFUWH+964IVW5zg,,,N,0,0,,,2014-04-05 12:27,2014-04-05 13:21,admin,admin,
1428,141171,1749,35667,642,0,N,N,N,CP_Drtn,TT_Task,DT_FixedDUR2,TK_NotStart,ENG-STR-BL2-SUB300,6th Floor  Beams,,2072,0,40,0,0,0,40,5,0,5,,,,2015-03-18 08:00,2015-03-23 16:00,,2014-04-23 08:00,2014-04-28 16:00,2014-04-23 08:00,2014-04-28 16:00,2014-04-23 08:00,2014-04-28 16:00,2015-03-18 08:00,2015-03-23 16:00,,PT_Normal,,,,,IEqiIAZwA0KM+1IAXm7CGw,mfZR9+K9uUSGEd4J++b5YA,,,N,0,0,,,2014-04-05 12:27,2014-04-05 13:21,admin,admin,
1429,141172,1749,35667,642,0,N,N,N,CP_Drtn,TT_Task,DT_FixedDUR2,TK_NotStart,ENG-STR-BL2-SUB310,7th Floor Slab,,2208,0,40,0,0,0,40,5,0,5,,,,2015-04-13 08:00,2015-04-18 16:00,,2014-04-29 08:00,2014-05-05 16:00,2014-04-29 08:00,2014-05-05 16:00,2014-04-29 08:00,2014-05-05 16:00,2015-04-13 08:00,2015-04-18 16:00,,PT_Normal,,,,,VDsqO45VYECiSKl/tYTqEw,/BEpyqMuQUSLhgwCkt3nOw,,,N,0,0,,,2014-04-05 12:27,2014-04-05 13:21,admin,admin,
1430,141173,1749,35667,642,0,N,N,N,CP_Drtn,TT_Task,DT_FixedDUR2,TK_NotStart,ENG-STR-BL2-SUB320,7th Floor  Beams,,2208,0,40,0,0,0,40,5,0,5,,,,2015-04-13 08:00,2015-04-18 16:00,,2014-04-29 08:00,2014-05-05 16:00,2014-04-29 08:00,2014-05-05 16:00,2014-04-29 08:00,2014-05-05 16:00,2015-04-13 08:00,2015-04-18 16:00,,PT_Normal,,,,,djxn5zfTjUy19zEsN/CFxQ,19BKdPXBoEekVl0Ox1kWtw,,,N,0,0,,,2014-04-05 12:27,2014-04-05 13:21,admin,admin,
1431,141174,1749,35667,642,0,N,N,N,CP_Drtn,TT_Task,DT_FixedDUR2,TK_NotStart,ENG-STR-BL2-SUB330,8th Floor Slab,,2344,0,40,0,0,0,40,5,0,5,,,,2015-05-09 08:00,2015-05-13 16:00,,2014-05-06 08:00,2014-05-11 16:00,2014-05-06 08:00,2014-05-11 16:00,2014-05-06 08:00,2014-05-11 16:00,2015-05-09 08:00,2015-05-13 16:00,,PT_Normal,,,,,dfHrMP04pUq1acOyvF4MjQ,O2mZnuhUM0mazaB/HubmZg,,,N,0,0,,,2014-04-05 12:27,2014-04-05 13:21,admin,admin,
1432,141175,1749,35667,642,0,N,N,N,CP_Drtn,TT_Task,DT_FixedDUR2,TK_NotStart,ENG-STR-BL2-SUB340,8th Floor  Beams,,2344,0,40,0,0,0,40,5,0,5,,,,2015-05-09 08:00,2015-05-13 16:00,,2014-05-06 08:00,2014-05-11 16:00,2014-05-06 08:00,2014-05-11 16:00,2014-05-06 08:00,2014-05-11 16:00,2015-05-09 08:00,2015-05-13 16:00,,PT_Normal,,,,,YiMqRYAJm0+se4S1lBhofQ,5IAZitk+906AswlQXPlBkQ,,,N,0,0,,,2014-04-05 12:27,2014-04-05 13:21,admin,admin,
1433,141176,1749,35667,642,0,N,N,N,CP_Drtn,TT_Task,DT_FixedDUR2,TK_NotStart,ENG-STR-BL2-SUB350,9th Floor Slab,,2440,0,40,0,0,0,40,5,0,5,,,,2015-05-28 08:00,2015-06-02 16:00,,2014-05-12 08:00,2014-05-17 16:00,2014-05-12 08:00,2014-05-17 16:00,2014-05-12 08:00,2014-05-17 16:00,2015-05-28 08:00,2015-06-02 16:00,,PT_Normal,,,,,Q1e/sQBIQ0G2zZz7QcNblw,kwvNqRJ9IUetKgjsfMLkPA,,,N,0,0,,,2014-04-05 12:27,2014-04-05 13:21,admin,admin,
1434,141177,1749,35667,642,0,N,N,N,CP_Drtn,TT_Task,DT_FixedDUR2,TK_NotStart,ENG-STR-BL2-SUB360,9th Floor  Beams,,2440,0,40,0,0,0,40,5,0,5,,,,2015-05-28 08:00,2015-06-02 16:00,,2014-05-12 08:00,2014-05-17 16:00,2014-05-12 08:00,2014-05-17 16:00,2014-05-12 08:00,2014-05-17 16:00,2015-05-28 08:00,2015-06-02 16:00,,PT_Normal,,,,,b8KSxw07uEadHTJ9v9+egA,QWQztHhYcUeLFf9aBPWHVw,,,N,0,0,,,2014-04-05 12:27,2014-04-05 13:21,admin,admin,
1435,141178,1749,35667,642,0,N,N,N,CP_Drtn,TT_Task,DT_FixedDUR2,TK_NotStart,ENG-STR-BL2-SUB370,Roof Floor Slab,,2440,0,40,0,0,0,40,5,0,5,,,,2015-06-03 08:00,2015-06-07 16:00,,2014-05-18 08:00,2014-05-22 16:00,2014-05-18 08:00,2014-05-22 16:00,2014-05-18 08:00,2014-05-22 16:00,2015-06-03 08:00,2015-06-07 16:00,,PT_Normal,,,,,mYphJ3D1eE6n1OKqHnCu5A,kwvNqRJ9IUetKgjsfMLkPA,,,N,0,0,,,2014-04-05 12:27,2014-04-05 13:21,admin,admin,
1436,141179,1749,35667,642,0,N,N,N,CP_Drtn,TT_Task,DT_FixedDUR2,TK_NotStart,ENG-STR-BL2-SUB380,Roof Floor  Beams,,2440,0,40,0,0,0,40,5,0,5,,,,2015-06-03 08:00,2015-06-07 16:00,,2014-05-18 08:00,2014-05-22 16:00,2014-05-18 08:00,2014-05-22 16:00,2014-05-18 08:00,2014-05-22 16:00,2015-06-03 08:00,2015-06-07 16:00,,PT_Normal,,,,,SoE8X5Yce0yZL4qhBkuj3A,QWQztHhYcUeLFf9aBPWHVw,,,N,0,0,,,2014-04-05 12:27,2014-04-05 13:21,admin,admin,
1437,141180,1749,35656,642,0,N,N,N,CP_Drtn,TT_Task,DT_FixedDUR2,TK_NotStart,ENG-STR-BL2-APP100,SS2 to 1st Walls,,608,416,112,0,0,0,112,14,0,14,,,,2014-06-11 08:00,2014-06-28 16:00,,2014-03-13 08:00,2014-03-29 16:00,2014-03-13 08:00,2014-03-29 16:00,2014-03-13 08:00,2014-03-29 16:00,2014-06-11 08:00,2014-06-28 16:00,,PT_Normal,,,,,yYkC0qs+JUq58a+rGjfdsQ,BVu7xfcEvEiiShFuMMWaNw,,,N,0,0,,,2014-04-05 12:27,2014-04-05 13:21,admin,admin,
1438,141181,1749,35656,642,0,N,N,N,CP_Drtn,TT_Task,DT_FixedDUR2,TK_NotStart,ENG-STR-BL2-APP110,SS2 to 1st  Columns,,568,376,112,0,0,0,112,14,0,14,,,,2014-06-11 08:00,2014-06-28 16:00,,2014-03-19 08:00,2014-04-03 16:00,2014-03-19 08:00,2014-04-03 16:00,2014-03-19 08:00,2014-04-03 16:00,2014-06-11 08:00,2014-06-28 16:00,,PT_Normal,,,,,X9yD7ghqGkysPQaiDJazMg,lMUAyXVPYkyGQh5rxIt4hQ,,,N,0,0,,,2014-04-05 12:27,2014-04-05 13:21,admin,admin,
1439,141182,1749,35656,642,0,N,N,N,CP_Drtn,TT_Task,DT_FixedDUR2,TK_NotStart,ENG-STR-BL2-APP120,SS2 to 1st Stairs,,528,336,112,0,0,0,112,14,0,14,,,,2014-06-11 08:00,2014-06-28 16:00,,2014-03-25 08:00,2014-04-09 16:00,2014-03-25 08:00,2014-04-09 16:00,2014-03-25 08:00,2014-04-09 16:00,2014-06-11 08:00,2014-06-28 16:00,,PT_Normal,,,,,PBUkCI1NWUmxcu2WoWXG2Q,Wvao/kFdAEy1QM73qWjoDw,,,N,0,0,,,2014-04-05 12:27,2014-04-05 13:21,admin,admin,
1440,141183,1749,35656,642,0,N,N,N,CP_Drtn,TT_Task,DT_FixedDUR2,TK_NotStart,ENG-STR-BL2-APP130,1st Floor Slab,,1160,968,112,0,0,0,112,14,0,14,,,,2014-10-02 08:00,2014-10-22 16:00,,2014-03-31 08:00,2014-04-15 16:00,2014-03-31 08:00,2014-04-15 16:00,2014-03-31 08:00,2014-04-15 16:00,2014-10-02 08:00,2014-10-22 16:00,,PT_Normal,,,,,QNij2vVHjkCPJaMhuHVeDg,ZbiUPr/I3E24A0ixGcbGSQ,,,N,0,0,,,2014-04-05 12:27,2014-04-05 13:21,admin,admin,
1441,141184,1749,35656,642,0,N,N,N,CP_Drtn,TT_Task,DT_FixedDUR2,TK_NotStart,ENG-STR-BL2-APP140,1st  Beams,,1160,968,112,0,0,0,112,14,0,14,,,,2014-10-02 08:00,2014-10-22 16:00,,2014-03-31 08:00,2014-04-15 16:00,2014-03-31 08:00,2014-04-15 16:00,2014-03-31 08:00,2014-04-15 16:00,2014-10-02 08:00,2014-10-22 16:00,,PT_Normal,,,,,u2N12DyttEW4BvEt8mpXuA,uiSoMVTXCEWcIx1xr05f3Q,,,N,0,0,,,2014-04-05 12:27,2014-04-05 13:21,admin,admin,
1442,141185,1749,35656,642,0,N,N,N,CP_Drtn,TT_Task,DT_FixedDUR2,TK_NotStart,ENG-STR-BL2-APP150,1st to 4th Walls,,1160,968,112,0,0,0,112,14,0,14,,,,2014-10-02 08:00,2014-10-22 16:00,,2014-03-31 08:00,2014-04-15 16:00,2014-03-31 08:00,2014-04-15 16:00,2014-03-31 08:00,2014-04-15 16:00,2014-10-02 08:00,2014-10-22 16:00,,PT_Normal,,,,,85+5GoSJMECMWjEUR6/ksA,jtzQW6JSA0ilkOULzBAY2A,,,N,0,0,,,2014-04-05 12:27,2014-04-05 13:21,admin,admin,
1443,141186,1749,35656,642,0,N,N,N,CP_Drtn,TT_Task,DT_FixedDUR2,TK_NotStart,ENG-STR-BL2-APP160,1st to 4th Columns,,1160,968,112,0,0,0,112,14,0,14,,,,2014-10-02 08:00,2014-10-22 16:00,,2014-03-31 08:00,2014-04-15 16:00,2014-03-31 08:00,2014-04-15 16:00,2014-03-31 08:00,2014-04-15 16:00,2014-10-02 08:00,2014-10-22 16:00,,PT_Normal,,,,,t7OxQbCk7UKYrVbbP3rF4A,omQLwfXBskmj4jaj0WqkuQ,,,N,0,0,,,2014-04-05 12:27,2014-04-05 13:21,admin,admin,
1444,141187,1749,35656,642,0,N,N,N,CP_Drtn,TT_Task,DT_FixedDUR2,TK_NotStart,ENG-STR-BL2-APP170,1st to 4th Stairs,,1160,968,112,0,0,0,112,14,0,14,,,,2014-10-02 08:00,2014-10-22 16:00,,2014-03-31 08:00,2014-04-15 16:00,2014-03-31 08:00,2014-04-15 16:00,2014-03-31 08:00,2014-04-15 16:00,2014-10-02 08:00,2014-10-22 16:00,,PT_Normal,,,,,Cu/hqBffzEiGIJTqK46mLg,KlWImFx5UUCcBNSxgk8WlA,,,N,0,0,,,2014-04-05 12:27,2014-04-05 13:21,admin,admin,
1445,141188,1749,35656,642,0,N,N,N,CP_Drtn,TT_Task,DT_FixedDUR2,TK_NotStart,ENG-STR-BL2-APP180,2nd Floor Slab,,1408,1216,112,0,0,0,112,14,0,14,,,,2014-11-22 08:00,2014-12-07 16:00,,2014-04-06 08:00,2014-04-21 16:00,2014-04-06 08:00,2014-04-21 16:00,2014-04-06 08:00,2014-04-21 16:00,2014-11-22 08:00,2014-12-07 16:00,,PT_Normal,,,,,1bDqjV0YOEWFkboJq3nmPw,ZnfFYt0BrUe/bTfLS77PTw,,,N,0,0,,,2014-04-05 12:27,2014-04-05 13:21,admin,admin,
1446,141189,1749,35656,642,0,N,N,N,CP_Drtn,TT_Task,DT_FixedDUR2,TK_NotStart,ENG-STR-BL2-APP190,2nd Floor  Beams,,1408,1216,112,0,0,0,112,14,0,14,,,,2014-11-22 08:00,2014-12-07 16:00,,2014-04-06 08:00,2014-04-21 16:00,2014-04-06 08:00,2014-04-21 16:00,2014-04-06 08:00,2014-04-21 16:00,2014-11-22 08:00,2014-12-07 16:00,,PT_Normal,,,,,cfngH85m4UehF4i3GyUR+Q,9/nAUx8KtkawYlLuSfALfw,,,N,0,0,,,2014-04-05 12:27,2014-04-05 13:21,admin,admin,
1447,141190,1749,35656,642,0,N,N,N,CP_Drtn,TT_Task,DT_FixedDUR2,TK_NotStart,ENG-STR-BL2-APP200,3rd Floor Slab,,1640,1448,112,0,0,0,112,14,0,14,,,,2014-12-31 08:00,2015-01-18 16:00,,2014-04-12 08:00,2014-04-27 16:00,2014-04-12 08:00,2014-04-27 16:00,2014-04-12 08:00,2014-04-27 16:00,2014-12-31 08:00,2015-01-18 16:00,,PT_Normal,,,,,rdP99NhEl0OgwfieLhIreg,8Zie/romfEyO4I6ew2gDUQ,,,N,0,0,,,2014-04-05 12:27,2014-04-05 13:21,admin,admin,
1448,141191,1749,35656,642,0,N,N,N,CP_Drtn,TT_Task,DT_FixedDUR2,TK_NotStart,ENG-STR-BL2-APP210,3rd Floor  Beams,,1640,1448,112,0,0,0,112,14,0,14,,,,2014-12-31 08:00,2015-01-18 16:00,,2014-04-12 08:00,2014-04-27 16:00,2014-04-12 08:00,2014-04-27 16:00,2014-04-12 08:00,2014-04-27 16:00,2014-12-31 08:00,2015-01-18 16:00,,PT_Normal,,,,,3D7XadLWc060qO7XJXZsDw,Hx/sf5bGOEyVZFqhYFgraQ,,,N,0,0,,,2014-04-05 12:27,2014-04-05 13:21,admin,admin,
1449,141192,1749,35656,642,0,N,N,N,CP_Drtn,TT_Task,DT_FixedDUR2,TK_NotStart,ENG-STR-BL2-APP220,4th Floor Slab,,1800,1608,112,0,0,0,112,14,0,14,,,,2015-02-01 08:00,2015-02-16 16:00,,2014-04-17 08:00,2014-05-04 16:00,2014-04-17 08:00,2014-05-04 16:00,2014-04-17 08:00,2014-05-04 16:00,2015-02-01 08:00,2015-02-16 16:00,,PT_Normal,,,,,QqtvbpGV0kSawiuJn9UFog,p1B6BsBZaUyRbC2w3HuMGQ,,,N,0,0,,,2014-04-05 12:27,2014-04-05 13:21,admin,admin,
1450,141193,1749,35656,642,0,N,N,N,CP_Drtn,TT_Task,DT_FixedDUR2,TK_NotStart,ENG-STR-BL2-APP230,4th Floor  Beams,,1800,1608,112,0,0,0,112,14,0,14,,,,2015-02-01 08:00,2015-02-16 16:00,,2014-04-17 08:00,2014-05-04 16:00,2014-04-17 08:00,2014-05-04 16:00,2014-04-17 08:00,2014-05-04 16:00,2015-02-01 08:00,2015-02-16 16:00,,PT_Normal,,,,,TTDk/LiGEUK/V/HX04xHqA,E+/wJpWhFEKVdqkCvJksFQ,,,N,0,0,,,2014-04-05 12:27,2014-04-05 13:21,admin,admin,
1451,141194,1749,35656,642,0,N,N,N,CP_Drtn,TT_Task,DT_FixedDUR2,TK_NotStart,ENG-STR-BL2-APP240,4th to Roof Walls,,1920,1728,112,0,0,0,112,14,0,14,,,,2015-02-01 08:00,2015-02-16 16:00,,2014-03-31 08:00,2014-04-15 16:00,2014-03-31 08:00,2014-04-15 16:00,2014-03-31 08:00,2014-04-15 16:00,2015-02-01 08:00,2015-02-16 16:00,,PT_Normal,,,,,sCmt7YOPWUiRy8jI4E7/Nw,elfK7zVvo0aaOuFs9ifkQQ,,,N,0,0,,,2014-04-05 12:27,2014-04-05 13:21,admin,admin,
1452,141195,1749,35656,642,0,N,N,N,CP_Drtn,TT_Task,DT_FixedDUR2,TK_NotStart,ENG-STR-BL2-APP250,4th to Roof  Columns,,1880,1688,112,0,0,0,112,14,0,14,,,,2015-02-01 08:00,2015-02-16 16:00,,2014-04-06 08:00,2014-04-21 16:00,2014-04-06 08:00,2014-04-21 16:00,2014-04-06 08:00,2014-04-21 16:00,2015-02-01 08:00,2015-02-16 16:00,,PT_Normal,,,,,wOOzv8CXV0alKBBSccNUWg,XpVKcaWAW06dEPP8zoY8pg,,,N,0,0,,,2014-04-05 12:27,2014-04-05 13:21,admin,admin,
1453,141196,1749,35656,642,0,N,N,N,CP_Drtn,TT_Task,DT_FixedDUR2,TK_NotStart,ENG-STR-BL2-APP260,4th to Roof Stairs,,1880,1688,112,0,0,0,112,14,0,14,,,,2015-02-01 08:00,2015-02-16 16:00,,2014-04-06 08:00,2014-04-21 16:00,2014-04-06 08:00,2014-04-21 16:00,2014-04-06 08:00,2014-04-21 16:00,2015-02-01 08:00,2015-02-16 16:00,,PT_Normal,,,,,i9mldnYdnkatQ9dLt17nqg,bxVIYor2VEORBjr2gmXVjA,,,N,0,0,,,2014-04-05 12:27,2014-04-05 13:21,admin,admin,
1454,141197,1749,35656,642,0,N,N,N,CP_Drtn,TT_Task,DT_FixedDUR2,TK_NotStart,ENG-STR-BL2-APP270,5th Floor Slab,,1936,1744,112,0,0,0,112,14,0,14,,,,2015-02-26 08:00,2015-03-14 16:00,,2014-04-23 08:00,2014-05-10 16:00,2014-04-23 08:00,2014-05-10 16:00,2014-04-23 08:00,2014-05-10 16:00,2015-02-26 08:00,2015-03-14 16:00,,PT_Normal,,,,,Vo+rgBIrCkqxIek+2RKDKA,oq8FER5iM0q7dtuqMhTHZg,,,N,0,0,,,2014-04-05 12:27,2014-04-05 13:21,admin,admin,
1455,141198,1749,35656,642,0,N,N,N,CP_Drtn,TT_Task,DT_FixedDUR2,TK_NotStart,ENG-STR-BL2-APP280,5th Floor  Beams,,1936,1744,112,0,0,0,112,14,0,14,,,,2015-02-26 08:00,2015-03-14 16:00,,2014-04-23 08:00,2014-05-10 16:00,2014-04-23 08:00,2014-05-10 16:00,2014-04-23 08:00,2014-05-10 16:00,2015-02-26 08:00,2015-03-14 16:00,,PT_Normal,,,,,UUG9P0aBCE6/aZJKIxlQ+w,TrB1SWLKB0ihz8me/pRitw,,,N,0,0,,,2014-04-05 12:27,2014-04-05 13:21,admin,admin,
1456,141199,1749,35656,642,0,N,N,N,CP_Drtn,TT_Task,DT_FixedDUR2,TK_NotStart,ENG-STR-BL2-APP290,6th Floor Slab,,2072,1880,112,0,0,0,112,14,0,14,,,,2015-03-24 08:00,2015-04-08 16:00,,2014-04-29 08:00,2014-05-15 16:00,2014-04-29 08:00,2014-05-15 16:00,2014-04-29 08:00,2014-05-15 16:00,2015-03-24 08:00,2015-04-08 16:00,,PT_Normal,,,,,u/WTQrb38EWFnjm2ii6GBg,9z3CSvYmg0C5YSuOZb08Iw,,,N,0,0,,,2014-04-05 12:27,2014-04-05 13:21,admin,admin,
1457,141200,1749,35656,642,0,N,N,N,CP_Drtn,TT_Task,DT_FixedDUR2,TK_NotStart,ENG-STR-BL2-APP300,6th Floor  Beams,,2072,1880,112,0,0,0,112,14,0,14,,,,2015-03-24 08:00,2015-04-08 16:00,,2014-04-29 08:00,2014-05-15 16:00,2014-04-29 08:00,2014-05-15 16:00,2014-04-29 08:00,2014-05-15 16:00,2015-03-24 08:00,2015-04-08 16:00,,PT_Normal,,,,,565GHTF/h06DbhwuUMRgow,oMJ6uP49PUe5yQxPYvcxKA,,,N,0,0,,,2014-04-05 12:27,2014-04-05 13:21,admin,admin,
1458,141201,1749,35656,642,0,N,N,N,CP_Drtn,TT_Task,DT_FixedDUR2,TK_NotStart,ENG-STR-BL2-APP310,7th Floor Slab,,2208,2016,112,0,0,0,112,14,0,14,,,,2015-04-19 08:00,2015-05-04 16:00,,2014-05-06 08:00,2014-05-21 16:00,2014-05-06 08:00,2014-05-21 16:00,2014-05-06 08:00,2014-05-21 16:00,2015-04-19 08:00,2015-05-04 16:00,,PT_Normal,,,,,SDE39iOGvkqipGvTtsGZ9g,fcPY15gumkmsIkbpGvzQ3Q,,,N,0,0,,,2014-04-05 12:27,2014-04-05 13:21,admin,admin,
1459,141202,1749,35656,642,0,N,N,N,CP_Drtn,TT_Task,DT_FixedDUR2,TK_NotStart,ENG-STR-BL2-APP320,7th Floor  Beams,,2208,2016,112,0,0,0,112,14,0,14,,,,2015-04-19 08:00,2015-05-04 16:00,,2014-05-06 08:00,2014-05-21 16:00,2014-05-06 08:00,2014-05-21 16:00,2014-05-06 08:00,2014-05-21 16:00,2015-04-19 08:00,2015-05-04 16:00,,PT_Normal,,,,,5PZvdxjfrUe8BQjwicq8HA,resYAsNJwEONMmPdidD1hg,,,N,0,0,,,2014-04-05 12:27,2014-04-05 13:21,admin,admin,
1460,141203,1749,35656,642,0,N,N,N,CP_Drtn,TT_Task,DT_FixedDUR2,TK_NotStart,ENG-STR-BL2-APP330,8th Floor Slab,,2344,2152,112,0,0,0,112,14,0,14,,,,2015-05-14 08:00,2015-05-30 16:00,,2014-05-12 08:00,2014-05-27 16:00,2014-05-12 08:00,2014-05-27 16:00,2014-05-12 08:00,2014-05-27 16:00,2015-05-14 08:00,2015-05-30 16:00,,PT_Normal,,,,,4lAB4+gAlk+iq6jt0KJorg,qrpU4n+9SUy26aKvMolgNg,,,N,0,0,,,2014-04-05 12:27,2014-04-05 13:21,admin,admin,
1461,141204,1749,35656,642,0,N,N,N,CP_Drtn,TT_Task,DT_FixedDUR2,TK_NotStart,ENG-STR-BL2-APP340,8th Floor  Beams,,2344,2152,112,0,0,0,112,14,0,14,,,,2015-05-14 08:00,2015-05-30 16:00,,2014-05-12 08:00,2014-05-27 16:00,2014-05-12 08:00,2014-05-27 16:00,2014-05-12 08:00,2014-05-27 16:00,2015-05-14 08:00,2015-05-30 16:00,,PT_Normal,,,,,1eAxJzYJO0GeyaUwzxgQwg,6vN+L2n+1Uq8YIkXjo6GDw,,,N,0,0,,,2014-04-05 12:27,2014-04-05 13:21,admin,admin,
1462,141205,1749,35656,642,0,N,N,N,CP_Drtn,TT_Task,DT_FixedDUR2,TK_NotStart,ENG-STR-BL2-APP350,9th Floor Slab,,2480,2288,112,0,0,0,112,14,0,14,,,,2015-06-08 08:00,2015-06-21 16:00,,2014-05-18 08:00,2014-06-02 16:00,2014-05-18 08:00,2014-06-02 16:00,2014-05-18 08:00,2014-06-02 16:00,2015-06-08 08:00,2015-06-21 16:00,,PT_Normal,,,,,asMhe5pWBEWBSNFM100VQQ,rtApqDnOWUi2b8o2pHt+5g,,,N,0,0,,,2014-04-05 12:27,2014-04-05 13:21,admin,admin,
1463,141206,1749,35656,642,0,N,N,N,CP_Drtn,TT_Task,DT_FixedDUR2,TK_NotStart,ENG-STR-BL2-APP360,9th Floor  Beams,,2480,2288,112,0,0,0,112,14,0,14,,,,2015-06-08 08:00,2015-06-21 16:00,,2014-05-18 08:00,2014-06-02 16:00,2014-05-18 08:00,2014-06-02 16:00,2014-05-18 08:00,2014-06-02 16:00,2015-06-08 08:00,2015-06-21 16:00,,PT_Normal,,,,,okosZJnQY0KM+na2lXkY6w,kAYynmsUdUGCzK/wQdkizA,,,N,0,0,,,2014-04-05 12:27,2014-04-05 13:21,admin,admin,
1464,141207,1749,35656,642,0,N,N,N,CP_Drtn,TT_Task,DT_FixedDUR2,TK_NotStart,ENG-STR-BL2-APP370,Roof Floor Slab,,2440,2248,112,0,0,0,112,14,0,14,,,,2015-06-08 08:00,2015-06-21 16:00,,2014-05-24 08:00,2014-06-08 16:00,2014-05-24 08:00,2014-06-08 16:00,2014-05-24 08:00,2014-06-08 16:00,2015-06-08 08:00,2015-06-21 16:00,,PT_Normal,,,,,YFzoFFQcZkSvhQcAfvt/7g,rtApqDnOWUi2b8o2pHt+5g,,,N,0,0,,,2014-04-05 12:27,2014-04-05 13:21,admin,admin,
1465,141208,1749,35656,642,0,N,N,N,CP_Drtn,TT_Task,DT_FixedDUR2,TK_NotStart,ENG-STR-BL2-APP380,Roof Floor  Beams,,2440,2248,112,0,0,0,112,14,0,14,,,,2015-06-08 08:00,2015-06-21 16:00,,2014-05-24 08:00,2014-06-08 16:00,2014-05-24 08:00,2014-06-08 16:00,2014-05-24 08:00,2014-06-08 16:00,2015-06-08 08:00,2015-06-21 16:00,,PT_Normal,,,,,/EqZNkwzCEOCqq8LQpI4vw,kAYynmsUdUGCzK/wQdkizA,,,N,0,0,,,2014-04-05 12:27,2014-04-05 13:21,admin,admin,
1466,141209,1749,35677,642,0,N,N,N,CP_Drtn,TT_Task,DT_FixedDUR2,TK_NotStart,ENG-STR-BL3-SUB100,SS2 to 1st Walls,,488,0,40,0,0,0,40,5,0,5,,,,2014-06-05 08:00,2014-06-10 16:00,,2014-03-25 08:00,2014-03-30 16:00,2014-03-25 08:00,2014-03-30 16:00,2014-03-25 08:00,2014-03-30 16:00,2014-06-05 08:00,2014-06-10 16:00,,PT_Normal,,,,,FWbRJ9wYL0WtiHQcQaAArw,Hkrt6JfTwkKM/50bNW1mOA,,,N,0,0,,,2014-04-05 12:27,2014-04-05 13:21,admin,admin,
1467,141210,1749,35677,642,0,N,N,N,CP_Drtn,TT_Task,DT_FixedDUR2,TK_NotStart,ENG-STR-BL3-SUB110,SS2 to 1st  Columns,,584,0,40,0,0,0,40,5,0,5,,,,2014-06-26 08:00,2014-07-02 14:00,,2014-03-31 08:00,2014-04-05 16:00,2014-03-31 08:00,2014-04-05 16:00,2014-03-31 08:00,2014-04-05 16:00,2014-06-26 08:00,2014-07-02 14:00,,PT_Normal,,,,,a3xHwYgLhUqTPJTjvyiOFw,Bb0kOfnlp0y2QSTCWC6YzQ,,,N,0,0,,,2014-04-05 12:27,2014-04-05 13:21,admin,admin,
1468,141211,1749,35677,642,0,N,N,N,CP_Drtn,TT_Task,DT_FixedDUR2,TK_NotStart,ENG-STR-BL3-SUB120,SS2 to 1st Stairs,,584,0,40,0,0,0,40,5,0,5,,,,2014-07-03 10:00,2014-07-12 14:00,,2014-04-06 08:00,2014-04-10 16:00,2014-04-06 08:00,2014-04-10 16:00,2014-04-06 08:00,2014-04-10 16:00,2014-07-03 10:00,2014-07-12 14:00,,PT_Normal,,,,,o4T6TPAZCEGXcVn1nNubfA,/0khXuw/cU6WBsFanuxmNQ,,,N,0,0,,,2014-04-05 12:27,2014-04-05 13:21,admin,admin,
1469,141212,1749,35677,642,0,N,N,N,CP_Drtn,TT_Task,DT_FixedDUR2,TK_NotStart,ENG-STR-BL3-SUB130,1st Floor Slab,,1096,0,40,0,0,0,40,5,0,5,,,,2014-10-08 10:00,2014-10-14 16:00,,2014-04-12 08:00,2014-04-16 16:00,2014-04-12 08:00,2014-04-16 16:00,2014-04-12 08:00,2014-04-16 16:00,2014-10-08 10:00,2014-10-14 16:00,,PT_Normal,,,,,R4IcSoq3aUGsEtcCDoqHKQ,Jl2dfDq8/UabZV6vKjNVKw,,,N,0,0,,,2014-04-05 12:27,2014-04-05 13:21,admin,admin,
1470,141213,1749,35677,642,0,N,N,N,CP_Drtn,TT_Task,DT_FixedDUR2,TK_NotStart,ENG-STR-BL3-SUB140,1st  Beams,,1096,0,40,0,0,0,40,5,0,5,,,,2014-10-08 10:00,2014-10-14 16:00,,2014-04-12 08:00,2014-04-16 16:00,2014-04-12 08:00,2014-04-16 16:00,2014-04-12 08:00,2014-04-16 16:00,2014-10-08 10:00,2014-10-14 16:00,,PT_Normal,,,,,c9lU8EfoDkeEd2CFdPNiOA,Kp+vGCt6LE211lC6jo0I3Q,,,N,0,0,,,2014-04-05 12:27,2014-04-05 13:21,admin,admin,
1471,141214,1749,35677,642,0,N,N,N,CP_Drtn,TT_Task,DT_FixedDUR2,TK_NotStart,ENG-STR-BL3-SUB150,1st to 4th Walls,,1096,0,40,0,0,0,40,5,0,5,,,,2014-10-15 08:00,2014-10-20 16:00,,2014-04-17 08:00,2014-04-22 16:00,2014-04-17 08:00,2014-04-22 16:00,2014-04-17 08:00,2014-04-22 16:00,2014-10-15 08:00,2014-10-20 16:00,,PT_Normal,,,,,4fuxlu/m/Ue9/bFQJbFrmw,k0AISWVU4kGw4AIeF0fCMA,,,N,0,0,,,2014-04-05 12:27,2014-04-05 13:21,admin,admin,
1472,141215,1749,35677,642,0,N,N,N,CP_Drtn,TT_Task,DT_FixedDUR2,TK_NotStart,ENG-STR-BL3-SUB160,1st to 4th   Columns,,1096,0,40,0,0,0,40,5,0,5,,,,2014-10-21 08:00,2014-10-27 16:00,,2014-04-23 08:00,2014-04-28 16:00,2014-04-23 08:00,2014-04-28 16:00,2014-04-23 08:00,2014-04-28 16:00,2014-10-21 08:00,2014-10-27 16:00,,PT_Normal,,,,,F6yyXmOKek6AOszVo4r5Yw,o+0kKW54m0aYmVB5JRLznw,,,N,0,0,,,2014-04-05 12:27,2014-04-05 13:21,admin,admin,
1473,141216,1749,35677,642,0,N,N,N,CP_Drtn,TT_Task,DT_FixedDUR2,TK_NotStart,ENG-STR-BL3-SUB170,1st to 4th    Stairs,,1096,0,40,0,0,0,40,5,0,5,,,,2014-10-28 08:00,2014-11-04 16:00,,2014-04-29 08:00,2014-05-05 16:00,2014-04-29 08:00,2014-05-05 16:00,2014-04-29 08:00,2014-05-05 16:00,2014-10-28 08:00,2014-11-04 16:00,,PT_Normal,,,,,HWkHGLGI/U6rJHOzdlPQ7Q,9JpEEgklJkOxLCd26FYEgA,,,N,0,0,,,2014-04-05 12:27,2014-04-05 13:21,admin,admin,
1474,141217,1749,35677,642,0,N,N,N,CP_Drtn,TT_Task,DT_FixedDUR2,TK_NotStart,ENG-STR-BL3-SUB180,2nd Floor Slab,,1328,0,40,0,0,0,40,5,0,5,,,,2014-12-09 08:00,2014-12-14 16:00,,2014-05-06 08:00,2014-05-11 16:00,2014-05-06 08:00,2014-05-11 16:00,2014-05-06 08:00,2014-05-11 16:00,2014-12-09 08:00,2014-12-14 16:00,,PT_Normal,,,,,BjQoLn7LNE6N957UcQDAnw,VD7s86IPeUKSGzWQGpr68Q,,,N,0,0,,,2014-04-05 12:27,2014-04-05 13:21,admin,admin,
1475,141218,1749,35677,642,0,N,N,N,CP_Drtn,TT_Task,DT_FixedDUR2,TK_NotStart,ENG-STR-BL3-SUB190,2nd Floor  Beams,,1328,0,40,0,0,0,40,5,0,5,,,,2014-12-09 08:00,2014-12-14 16:00,,2014-05-06 08:00,2014-05-11 16:00,2014-05-06 08:00,2014-05-11 16:00,2014-05-06 08:00,2014-05-11 16:00,2014-12-09 08:00,2014-12-14 16:00,,PT_Normal,,,,,/6ruDB9aZ0erBDNU7OPj6A,bN+kVAP/sUKC4mqPxARjfw,,,N,0,0,,,2014-04-05 12:27,2014-04-05 13:21,admin,admin,
1476,141219,1749,35677,642,0,N,N,N,CP_Drtn,TT_Task,DT_FixedDUR2,TK_NotStart,ENG-STR-BL3-SUB200,3rd Floor Slab,,1560,0,40,0,0,0,40,5,0,5,,,,2015-01-20 08:00,2015-01-25 16:00,,2014-05-12 08:00,2014-05-17 16:00,2014-05-12 08:00,2014-05-17 16:00,2014-05-12 08:00,2014-05-17 16:00,2015-01-20 08:00,2015-01-25 16:00,,PT_Normal,,,,,Q9qnCrdw106ygJzVUfOaIA,R4VJMJM9w0mFnABwzmxR3Q,,,N,0,0,,,2014-04-05 12:27,2014-04-05 13:21,admin,admin,
1477,141220,1749,35677,642,0,N,N,N,CP_Drtn,TT_Task,DT_FixedDUR2,TK_NotStart,ENG-STR-BL3-SUB210,3rd Floor  Beams,,1560,0,40,0,0,0,40,5,0,5,,,,2015-01-20 08:00,2015-01-25 16:00,,2014-05-12 08:00,2014-05-17 16:00,2014-05-12 08:00,2014-05-17 16:00,2014-05-12 08:00,2014-05-17 16:00,2015-01-20 08:00,2015-01-25 16:00,,PT_Normal,,,,,zNo+wqZYiUKw+b9Dn2405w,M2Rxnnui4UGa6u3mZKSW5g,,,N,0,0,,,2014-04-05 12:27,2014-04-05 13:21,admin,admin,
1478,141221,1749,35677,642,0,N,N,N,CP_Drtn,TT_Task,DT_FixedDUR2,TK_NotStart,ENG-STR-BL3-SUB220,4th Floor Slab,,1576,0,40,0,0,0,40,5,0,5,,,,2015-01-28 08:00,2015-02-02 16:00,,2014-05-18 08:00,2014-05-22 16:00,2014-05-18 08:00,2014-05-22 16:00,2014-05-18 08:00,2014-05-22 16:00,2015-01-28 08:00,2015-02-02 16:00,,PT_Normal,,,,,20QnnmcGwUe9dyxA2V67Rw,8EbTmhZTYkmYLcGFRLAPvw,,,N,0,0,,,2014-04-05 12:27,2014-04-05 13:21,admin,admin,
1479,141222,1749,35677,642,0,N,N,N,CP_Drtn,TT_Task,DT_FixedDUR2,TK_NotStart,ENG-STR-BL3-SUB230,4th Floor  Beams,,1576,0,40,0,0,0,40,5,0,5,,,,2015-01-28 08:00,2015-02-02 16:00,,2014-05-18 08:00,2014-05-22 16:00,2014-05-18 08:00,2014-05-22 16:00,2014-05-18 08:00,2014-05-22 16:00,2015-01-28 08:00,2015-02-02 16:00,,PT_Normal,,,,,YlgeQg3ltEGPLvKQvGrZKg,ss+XReAyJUShyM6G3e57QA,,,N,0,0,,,2014-04-05 12:27,2014-04-05 13:21,admin,admin,
1480,141223,1749,35677,642,0,N,N,N,CP_Drtn,TT_Task,DT_FixedDUR2,TK_NotStart,ENG-STR-BL3-SUB240,4th to 7th Walls,,1576,0,40,0,0,0,40,5,0,5,,,,2015-02-03 08:00,2015-02-08 16:00,,2014-05-24 08:00,2014-05-28 16:00,2014-05-24 08:00,2014-05-28 16:00,2014-05-24 08:00,2014-05-28 16:00,2015-02-03 08:00,2015-02-08 16:00,,PT_Normal,,,,,05LkGLS+m0y9DWM3Cwq3pA,DOA+/6mM0ECRFOj4PFniuA,,,N,0,0,,,2014-04-05 12:27,2014-04-05 13:21,admin,admin,
1481,141224,1749,35677,642,0,N,N,N,CP_Drtn,TT_Task,DT_FixedDUR2,TK_NotStart,ENG-STR-BL3-SUB250,4th to 7th Columns,,1576,0,40,0,0,0,40,5,0,5,,,,2015-02-09 08:00,2015-02-14 16:00,,2014-05-29 08:00,2014-06-03 16:00,2014-05-29 08:00,2014-06-03 16:00,2014-05-29 08:00,2014-06-03 16:00,2015-02-09 08:00,2015-02-14 16:00,,PT_Normal,,,,,6zbhb9ulBEWcjMla3J50kQ,Bhg0+ShoyEK3E/65jM+0aQ,,,N,0,0,,,2014-04-05 12:27,2014-04-05 13:21,admin,admin,
1482,141225,1749,35677,642,0,N,N,N,CP_Drtn,TT_Task,DT_FixedDUR2,TK_NotStart,ENG-STR-BL3-SUB260,4th to 7th Stairs,,1576,0,40,0,0,0,40,5,0,5,,,,2015-02-15 08:00,2015-02-19 16:00,,2014-06-04 08:00,2014-06-09 16:00,2014-06-04 08:00,2014-06-09 16:00,2014-06-04 08:00,2014-06-09 16:00,2015-02-15 08:00,2015-02-19 16:00,,PT_Normal,,,,,mV5sTpbyXEucPRnHw+RLYA,2QKmX97uXkysBOngPzD1cg,,,N,0,0,,,2014-04-05 12:27,2014-04-05 13:21,admin,admin,
1483,141226,1749,35677,642,0,N,N,N,CP_Drtn,TT_Task,DT_FixedDUR2,TK_NotStart,ENG-STR-BL3-SUB270,5th Floor Slab,,1712,0,40,0,0,0,40,5,0,5,,,,2015-03-12 08:00,2015-03-17 16:00,,2014-06-10 08:00,2014-06-15 16:00,2014-06-10 08:00,2014-06-15 16:00,2014-06-10 08:00,2014-06-15 16:00,2015-03-12 08:00,2015-03-17 16:00,,PT_Normal,,,,,cw8nOijXxk211D0sgazzSw,XhSpS0Dbr0OW+fbtNP4K4A,,,N,0,0,,,2014-04-05 12:27,2014-04-05 13:21,admin,admin,
1484,141227,1749,35677,642,0,N,N,N,CP_Drtn,TT_Task,DT_FixedDUR2,TK_NotStart,ENG-STR-BL3-SUB280,5th Floor  Beams,,1712,0,40,0,0,0,40,5,0,5,,,,2015-03-12 08:00,2015-03-17 16:00,,2014-06-10 08:00,2014-06-15 16:00,2014-06-10 08:00,2014-06-15 16:00,2014-06-10 08:00,2014-06-15 16:00,2015-03-12 08:00,2015-03-17 16:00,,PT_Normal,,,,,CSiLCtnpl0WZMxMXAm8IRg,pxzA0Ay5tU2IsbuaJSFN9g,,,N,0,0,,,2014-04-05 12:27,2014-04-05 13:21,admin,admin,
1485,141228,1749,35677,642,0,N,N,N,CP_Drtn,TT_Task,DT_FixedDUR2,TK_NotStart,ENG-STR-BL3-SUB290,6th Floor Slab,,1848,0,40,0,0,0,40,5,0,5,,,,2015-04-07 08:00,2015-04-12 16:00,,2014-06-16 08:00,2014-06-22 16:00,2014-06-16 08:00,2014-06-22 16:00,2014-06-16 08:00,2014-06-22 16:00,2015-04-07 08:00,2015-04-12 16:00,,PT_Normal,,,,,mI6hl+lhekefWUMwowZraQ,KuuNdb8ln0atpan22sWTBg,,,N,0,0,,,2014-04-05 12:27,2014-04-05 13:21,admin,admin,
1486,141229,1749,35677,642,0,N,N,N,CP_Drtn,TT_Task,DT_FixedDUR2,TK_NotStart,ENG-STR-BL3-SUB300,6th Floor  Beams,,1848,0,40,0,0,0,40,5,0,5,,,,2015-04-07 08:00,2015-04-12 16:00,,2014-06-16 08:00,2014-06-22 16:00,2014-06-16 08:00,2014-06-22 16:00,2014-06-16 08:00,2014-06-22 16:00,2015-04-07 08:00,2015-04-12 16:00,,PT_Normal,,,,,nRnex0DNNk+cnn6EgmeKrQ,mHjK2duUIUKxhc+PCBzYGA,,,N,0,0,,,2014-04-05 12:27,2014-04-05 13:21,admin,admin,
1487,141230,1749,35677,642,0,N,N,N,CP_Drtn,TT_Task,DT_FixedDUR2,TK_NotStart,ENG-STR-BL3-SUB310,7th Floor Slab,,1864,0,40,0,0,0,40,5,0,5,,,,2015-04-15 08:00,2015-04-20 16:00,,2014-06-23 08:00,2014-06-28 16:00,2014-06-23 08:00,2014-06-28 16:00,2014-06-23 08:00,2014-06-28 16:00,2015-04-15 08:00,2015-04-20 16:00,,PT_Normal,,,,,GQxUBQhq1EWRYcwPV6RVRQ,TC+MypV9u0uqqCDIATxXXw,,,N,0,0,,,2014-04-05 12:27,2014-04-05 13:21,admin,admin,
1488,141231,1749,35677,642,0,N,N,N,CP_Drtn,TT_Task,DT_FixedDUR2,TK_NotStart,ENG-STR-BL3-SUB320,7th Floor  Beams,,1864,0,40,0,0,0,40,5,0,5,,,,2015-04-15 08:00,2015-04-20 16:00,,2014-06-23 08:00,2014-06-28 16:00,2014-06-23 08:00,2014-06-28 16:00,2014-06-23 08:00,2014-06-28 16:00,2015-04-15 08:00,2015-04-20 16:00,,PT_Normal,,,,,MfI+Ywd4KkmZ2bC9DphdJQ,xwjksWCm5kiqqbSjEF9Pgg,,,N,0,0,,,2014-04-05 12:27,2014-04-05 13:21,admin,admin,
1489,141232,1749,35677,642,0,N,N,N,CP_Drtn,TT_Task,DT_FixedDUR2,TK_NotStart,ENG-STR-BL3-SUB330,7th to 9th Walls,,1864,0,40,0,0,0,40,5,0,5,,,,2015-05-03 08:00,2015-05-07 16:00,,2014-07-17 10:00,2014-07-26 14:00,2014-07-17 10:00,2014-07-26 14:00,2014-07-17 10:00,2014-07-26 14:00,2015-05-03 08:00,2015-05-07 16:00,,PT_Normal,,,,,O1b4SYOhjEWfYeNsk2D8CQ,kwvNqRJ9IUetKgjsfMLkPA,,,N,0,0,,,2014-04-05 12:27,2014-04-05 13:21,admin,admin,
1490,141233,1749,35677,642,0,N,N,N,CP_Drtn,TT_Task,DT_FixedDUR2,TK_NotStart,ENG-STR-BL3-SUB340,7th to 9th Columns,,1864,0,40,0,0,0,40,5,0,5,,,,2015-04-21 08:00,2015-04-26 16:00,,2014-06-29 08:00,2014-07-06 14:00,2014-06-29 08:00,2014-07-06 14:00,2014-06-29 08:00,2014-07-06 14:00,2015-04-21 08:00,2015-04-26 16:00,,PT_Normal,,,,,3BEwBh0Rb0acCwpARdYoAg,QWQztHhYcUeLFf9aBPWHVw,,,N,0,0,,,2014-04-05 12:27,2014-04-05 13:21,admin,admin,
1491,141234,1749,35677,642,0,N,N,N,CP_Drtn,TT_Task,DT_FixedDUR2,TK_NotStart,ENG-STR-BL3-SUB350,7th to 9th Stairs,,1864,0,40,0,0,0,40,5,0,5,,,,2015-04-27 08:00,2015-05-02 16:00,,2014-07-07 10:00,2014-07-16 14:00,2014-07-07 10:00,2014-07-16 14:00,2014-07-07 10:00,2014-07-16 14:00,2015-04-27 08:00,2015-05-02 16:00,,PT_Normal,,,,,Cz19OmVJak6vIjRmbyM7tQ,pEdxP3uh20S/PIh0vH0D5w,,,N,0,0,,,2014-04-05 12:27,2014-04-05 13:21,admin,admin,
1492,141235,1749,35677,642,0,N,N,N,CP_Drtn,TT_Task,DT_FixedDUR2,TK_NotStart,ENG-STR-BL3-SUB360,8th Floor  Beams,,2040,0,40,0,0,0,40,5,0,5,,,,2015-05-28 08:00,2015-06-02 16:00,,2014-07-17 10:00,2014-07-26 14:00,2014-07-17 10:00,2014-07-26 14:00,2014-07-17 10:00,2014-07-26 14:00,2015-05-28 08:00,2015-06-02 16:00,,PT_Normal,,,,,HD1ZwifPEUWNOQmkz+vf8g,A65Di+eQLUulZzNarLyYVg,,,N,0,0,,,2014-04-05 12:27,2014-04-05 13:21,admin,admin,
1493,141236,1749,35677,642,0,N,N,N,CP_Drtn,TT_Task,DT_FixedDUR2,TK_NotStart,ENG-STR-BL3-SUB370,8th Floor Slab,,2040,0,40,0,0,0,40,5,0,5,,,,2015-05-28 08:00,2015-06-02 16:00,,2014-07-17 10:00,2014-07-26 14:00,2014-07-17 10:00,2014-07-26 14:00,2014-07-17 10:00,2014-07-26 14:00,2015-05-28 08:00,2015-06-02 16:00,,PT_Normal,,,,,yqnVresTzk+lL7D/gNOugw,feX8rsomHUikuKfeSLIbyg,,,N,0,0,,,2014-04-05 12:27,2014-04-05 13:21,admin,admin,
1494,141237,1749,35677,642,0,N,N,N,CP_Drtn,TT_Task,DT_FixedDUR2,TK_NotStart,ENG-STR-BL3-SUB380,9th Floor  Beams,,2056,0,40,0,0,0,40,5,0,5,,,,2015-06-05 08:00,2015-06-09 16:00,,2014-07-27 10:00,2014-08-04 16:00,2014-07-27 10:00,2014-08-04 16:00,2014-07-27 10:00,2014-08-04 16:00,2015-06-05 08:00,2015-06-09 16:00,,PT_Normal,,,,,SIfM58siTUGbnRL5ahPSAQ,RePzKad0akmgxxVn9qb22Q,,,N,0,0,,,2014-04-05 12:27,2014-04-05 13:21,admin,admin,
1495,141238,1749,35677,642,0,N,N,N,CP_Drtn,TT_Task,DT_FixedDUR2,TK_NotStart,ENG-STR-BL3-SUB390,9th Floor Slab,,2056,0,40,0,0,0,40,5,0,5,,,,2015-06-05 08:00,2015-06-09 16:00,,2014-07-27 10:00,2014-08-04 16:00,2014-07-27 10:00,2014-08-04 16:00,2014-07-27 10:00,2014-08-04 16:00,2015-06-05 08:00,2015-06-09 16:00,,PT_Normal,,,,,W7Gw0pOGE0CVcFJaXpoVJg,ZJiIy2SlokGc6aMRikO4nw,,,N,0,0,,,2014-04-05 12:27,2014-04-05 13:21,admin,admin,
1496,141239,1749,35677,642,0,N,N,N,CP_Drtn,TT_Task,DT_FixedDUR2,TK_NotStart,ENG-STR-BL3-SUB400,9th to Roof Walls,,2056,0,40,0,0,0,40,5,0,5,,,,2015-06-10 08:00,2015-06-14 16:00,,2014-08-05 08:00,2014-08-10 16:00,2014-08-05 08:00,2014-08-10 16:00,2014-08-05 08:00,2014-08-10 16:00,2015-06-10 08:00,2015-06-14 16:00,,PT_Normal,,,,,oy+nMVzNIEGueEh1OEWIQw,xWKTI1fxyU+WFy8762k+RA,,,N,0,0,,,2014-04-05 12:27,2014-04-05 13:21,admin,admin,
1497,141240,1749,35677,642,0,N,N,N,CP_Drtn,TT_Task,DT_FixedDUR2,TK_NotStart,ENG-STR-BL3-SUB410,9th to Roof Columns,,2056,0,40,0,0,0,40,5,0,5,,,,2015-06-15 08:00,2015-06-19 16:00,,2014-08-11 08:00,2014-08-16 16:00,2014-08-11 08:00,2014-08-16 16:00,2014-08-11 08:00,2014-08-16 16:00,2015-06-15 08:00,2015-06-19 16:00,,PT_Normal,,,,,GQMDm+0xyE+D8DNMgaHfUA,Y0Cq9UFRxkyU8m0ZkZHpdQ,,,N,0,0,,,2014-04-05 12:27,2014-04-05 13:21,admin,admin,
1498,141241,1749,35677,642,0,N,N,N,CP_Drtn,TT_Task,DT_FixedDUR2,TK_NotStart,ENG-STR-BL3-SUB420,9th to Roof Stairs,,2056,0,40,0,0,0,40,5,0,5,,,,2015-06-20 08:00,2015-06-24 16:00,,2014-08-17 08:00,2014-08-21 16:00,2014-08-17 08:00,2014-08-21 16:00,2014-08-17 08:00,2014-08-21 16:00,2015-06-20 08:00,2015-06-24 16:00,,PT_Normal,,,,,sRNuWamv9Ey4dUnZ+j0KwA,oCRLPLVBYkKpz1DmJAZaJQ,,,N,0,0,,,2014-04-05 12:27,2014-04-05 13:21,admin,admin,
1499,141242,1749,35677,642,0,N,N,N,CP_Drtn,TT_Task,DT_FixedDUR2,TK_NotStart,ENG-STR-BL3-SUB430,10th Floor  Beams,,2192,0,40,0,0,0,40,5,0,5,,,,2015-07-12 08:00,2015-07-16 16:00,,2014-08-23 08:00,2014-08-27 16:00,2014-08-23 08:00,2014-08-27 16:00,2014-08-23 08:00,2014-08-27 16:00,2015-07-12 08:00,2015-07-16 16:00,,PT_Normal,,,,,EcUJRlhsLE+c9d0C8EtdJw,RePzKad0akmgxxVn9qb22Q,,,N,0,0,,,2014-04-05 12:27,2014-04-05 13:21,admin,admin,
1500,141243,1749,35677,642,0,N,N,N,CP_Drtn,TT_Task,DT_FixedDUR2,TK_NotStart,ENG-STR-BL3-SUB440,10th Floor Slab,,2192,0,40,0,0,0,40,5,0,5,,,,2015-07-12 08:00,2015-07-16 16:00,,2014-08-23 08:00,2014-08-27 16:00,2014-08-23 08:00,2014-08-27 16:00,2014-08-23 08:00,2014-08-27 16:00,2015-07-12 08:00,2015-07-16 16:00,,PT_Normal,,,,,pDNRTCtTI0O14i1NbxOb6g,ZJiIy2SlokGc6aMRikO4nw,,,N,0,0,,,2014-04-05 12:27,2014-04-05 13:21,admin,admin,
1501,141244,1749,35677,642,0,N,N,N,CP_Drtn,TT_Task,DT_FixedDUR2,TK_NotStart,ENG-STR-BL3-SUB450,11th Floor  Beams,,2288,0,40,0,0,0,40,5,0,5,,,,2015-07-29 08:00,2015-08-02 16:00,,2014-08-28 08:00,2014-09-02 16:00,2014-08-28 08:00,2014-09-02 16:00,2014-08-28 08:00,2014-09-02 16:00,2015-07-29 08:00,2015-08-02 16:00,,PT_Normal,,,,,o1xREKP21Ey8I5ukKsXEOw,RePzKad0akmgxxVn9qb22Q,,,N,0,0,,,2014-04-05 12:27,2014-04-05 13:21,admin,admin,
1502,141245,1749,35677,642,0,N,N,N,CP_Drtn,TT_Task,DT_FixedDUR2,TK_NotStart,ENG-STR-BL3-SUB460,11th Floor Slab,,2288,0,40,0,0,0,40,5,0,5,,,,2015-07-29 08:00,2015-08-02 16:00,,2014-08-28 08:00,2014-09-02 16:00,2014-08-28 08:00,2014-09-02 16:00,2014-08-28 08:00,2014-09-02 16:00,2015-07-29 08:00,2015-08-02 16:00,,PT_Normal,,,,,4ZPNYWxEdkKzOKO8a2zIeQ,ZJiIy2SlokGc6aMRikO4nw,,,N,0,0,,,2014-04-05 12:27,2014-04-05 13:21,admin,admin,
1503,141246,1749,35677,642,0,N,N,N,CP_Drtn,TT_Task,DT_FixedDUR2,TK_NotStart,ENG-STR-BL3-SUB470,Roof Floor  Beams,,2288,0,40,0,0,0,40,5,0,5,,,,2015-08-03 08:00,2015-08-07 16:00,,2014-09-03 08:00,2014-09-08 16:00,2014-09-03 08:00,2014-09-08 16:00,2014-09-03 08:00,2014-09-08 16:00,2015-08-03 08:00,2015-08-07 16:00,,PT_Normal,,,,,j/e0BfNoSEaqY/PxgdE06Q,RePzKad0akmgxxVn9qb22Q,,,N,0,0,,,2014-04-05 12:27,2014-04-05 13:21,admin,admin,
1504,141247,1749,35677,642,0,N,N,N,CP_Drtn,TT_Task,DT_FixedDUR2,TK_NotStart,ENG-STR-BL3-SUB480,Roof Floor Slab,,2288,0,40,0,0,0,40,5,0,5,,,,2015-08-03 08:00,2015-08-07 16:00,,2014-09-03 08:00,2014-09-08 16:00,2014-09-03 08:00,2014-09-08 16:00,2014-09-03 08:00,2014-09-08 16:00,2015-08-03 08:00,2015-08-07 16:00,,PT_Normal,,,,,s1jaaKs3sEumVmlwl9bkbg,ZJiIy2SlokGc6aMRikO4nw,,,N,0,0,,,2014-04-05 12:27,2014-04-05 13:21,admin,admin,
1505,141248,1749,35650,642,0,N,N,N,CP_Drtn,TT_Task,DT_FixedDUR2,TK_NotStart,ENG-STR-BL3-APP100,SS2 to 1st Walls,,488,296,112,0,0,0,112,14,0,14,,,,2014-06-11 08:00,2014-06-28 16:00,,2014-03-31 08:00,2014-04-15 16:00,2014-03-31 08:00,2014-04-15 16:00,2014-03-31 08:00,2014-04-15 16:00,2014-06-11 08:00,2014-06-28 16:00,,PT_Normal,,,,,zLQeG4f+BE24Hom+PwFWJQ,kU81ESJTfEaJpvCRvc4wxA,,,N,0,0,,,2014-04-05 12:27,2014-04-05 13:21,admin,admin,
1506,141249,1749,35650,642,0,N,N,N,CP_Drtn,TT_Task,DT_FixedDUR2,TK_NotStart,ENG-STR-BL3-APP110,SS2 to 1st Columns,,624,624,112,0,0,0,112,14,0,14,,,,2014-07-13 10:00,2014-08-06 16:00,,2014-04-06 08:00,2014-04-21 16:00,2014-04-06 08:00,2014-04-21 16:00,2014-04-06 08:00,2014-04-21 16:00,2014-07-13 10:00,2014-08-06 16:00,,PT_Normal,,,,,sJwI1Ffze0qjOS96IdK7vQ,5fdkpxbcSUa8DMueYTh/bw,,,N,0,0,,,2014-04-05 12:27,2014-04-05 13:21,admin,admin,
1507,141250,1749,35650,642,0,N,N,N,CP_Drtn,TT_Task,DT_FixedDUR2,TK_NotStart,ENG-STR-BL3-APP120,SS2 to 1st Stairs,,584,584,112,0,0,0,112,14,0,14,,,,2014-07-13 10:00,2014-08-06 16:00,,2014-04-12 08:00,2014-04-27 16:00,2014-04-12 08:00,2014-04-27 16:00,2014-04-12 08:00,2014-04-27 16:00,2014-07-13 10:00,2014-08-06 16:00,,PT_Normal,,,,,NrvaWPBgzU6zkSmrStLxMw,tPtCPIm3K0SI4EIeiU7H9A,,,N,0,0,,,2014-04-05 12:27,2014-04-05 13:21,admin,admin,
1508,141251,1749,35650,642,0,N,N,N,CP_Drtn,TT_Task,DT_FixedDUR2,TK_NotStart,ENG-STR-BL3-APP130,1st Floor Slab,,1216,1216,112,0,0,0,112,14,0,14,,,,2014-11-05 08:00,2014-11-20 16:00,,2014-04-17 08:00,2014-05-04 16:00,2014-04-17 08:00,2014-05-04 16:00,2014-04-17 08:00,2014-05-04 16:00,2014-11-05 08:00,2014-11-20 16:00,,PT_Normal,,,,,5tjZCPr3tUikisvIfbjw8A,IfOXiWkMnEisloQAGX4xKw,,,N,0,0,,,2014-04-05 12:27,2014-04-05 13:21,admin,admin,
1509,141252,1749,35650,642,0,N,N,N,CP_Drtn,TT_Task,DT_FixedDUR2,TK_NotStart,ENG-STR-BL3-APP140,1st  Beams,,1216,1216,112,0,0,0,112,14,0,14,,,,2014-11-05 08:00,2014-11-20 16:00,,2014-04-17 08:00,2014-05-04 16:00,2014-04-17 08:00,2014-05-04 16:00,2014-04-17 08:00,2014-05-04 16:00,2014-11-05 08:00,2014-11-20 16:00,,PT_Normal,,,,,6+4/6YOeuEOWnICoklnJ3g,V1IIVGjKnECj7rh7WkfEyg,,,N,0,0,,,2014-04-05 12:27,2014-04-05 13:21,admin,admin,
1510,141253,1749,35650,642,0,N,N,N,CP_Drtn,TT_Task,DT_FixedDUR2,TK_NotStart,ENG-STR-BL3-APP150,1st to 4th Walls,,1176,1176,112,0,0,0,112,14,0,14,,,,2014-11-05 08:00,2014-11-20 16:00,,2014-04-23 08:00,2014-05-10 16:00,2014-04-23 08:00,2014-05-10 16:00,2014-04-23 08:00,2014-05-10 16:00,2014-11-05 08:00,2014-11-20 16:00,,PT_Normal,,,,,0htkXLhBeUmLWRuYv7FhNQ,s37uAyycFkycrjmN7DPedA,,,N,0,0,,,2014-04-05 12:27,2014-04-05 13:21,admin,admin,
1511,141254,1749,35650,642,0,N,N,N,CP_Drtn,TT_Task,DT_FixedDUR2,TK_NotStart,ENG-STR-BL3-APP160,1st to 4th   Columns,,1136,1136,112,0,0,0,112,14,0,14,,,,2014-11-05 08:00,2014-11-20 16:00,,2014-04-29 08:00,2014-05-15 16:00,2014-04-29 08:00,2014-05-15 16:00,2014-04-29 08:00,2014-05-15 16:00,2014-11-05 08:00,2014-11-20 16:00,,PT_Normal,,,,,Pp6KGqWGTE+6J47PrUwvIw,p5ZSUd0b3EeEgt3fty90Eg,,,N,0,0,,,2014-04-05 12:27,2014-04-05 13:21,admin,admin,
1512,141255,1749,35650,642,0,N,N,N,CP_Drtn,TT_Task,DT_FixedDUR2,TK_NotStart,ENG-STR-BL3-APP170,1st to 4th    Stairs,,1096,1096,112,0,0,0,112,14,0,14,,,,2014-11-05 08:00,2014-11-20 16:00,,2014-05-06 08:00,2014-05-21 16:00,2014-05-06 08:00,2014-05-21 16:00,2014-05-06 08:00,2014-05-21 16:00,2014-11-05 08:00,2014-11-20 16:00,,PT_Normal,,,,,zyNkVgtbLUiutUtH/JqRPQ,08DnVQ4GvkaTYSrwQql3eA,,,N,0,0,,,2014-04-05 12:27,2014-04-05 13:21,admin,admin,
1513,141256,1749,35650,642,0,N,N,N,CP_Drtn,TT_Task,DT_FixedDUR2,TK_NotStart,ENG-STR-BL3-APP180,2nd Floor Slab,,1328,1328,112,0,0,0,112,14,0,14,,,,2014-12-15 08:00,2014-12-30 16:00,,2014-05-12 08:00,2014-05-27 16:00,2014-05-12 08:00,2014-05-27 16:00,2014-05-12 08:00,2014-05-27 16:00,2014-12-15 08:00,2014-12-30 16:00,,PT_Normal,,,,,g6dEU6mI8UibUe8w7SljZQ,hk423BXssEi+udpKFXfz5Q,,,N,0,0,,,2014-04-05 12:27,2014-04-05 13:21,admin,admin,
1514,141257,1749,35650,642,0,N,N,N,CP_Drtn,TT_Task,DT_FixedDUR2,TK_NotStart,ENG-STR-BL3-APP190,2nd Floor  Beams,,1328,1328,112,0,0,0,112,14,0,14,,,,2014-12-15 08:00,2014-12-30 16:00,,2014-05-12 08:00,2014-05-27 16:00,2014-05-12 08:00,2014-05-27 16:00,2014-05-12 08:00,2014-05-27 16:00,2014-12-15 08:00,2014-12-30 16:00,,PT_Normal,,,,,IyN62tKeOkeyR95HZZwZWg,eN4EE2qeEUKMixhJILX/Gg,,,N,0,0,,,2014-04-05 12:27,2014-04-05 13:21,admin,admin,
1515,141258,1749,35650,642,0,N,N,N,CP_Drtn,TT_Task,DT_FixedDUR2,TK_NotStart,ENG-STR-BL3-APP200,3rd Floor Slab,,1560,1560,112,0,0,0,112,14,0,14,,,,2015-01-26 08:00,2015-02-10 16:00,,2014-05-18 08:00,2014-06-02 16:00,2014-05-18 08:00,2014-06-02 16:00,2014-05-18 08:00,2014-06-02 16:00,2015-01-26 08:00,2015-02-10 16:00,,PT_Normal,,,,,uNiTv61KHUuspd2X9HuVJg,be6dewo47k6ZgU1Q3o7peQ,,,N,0,0,,,2014-04-05 12:27,2014-04-05 13:21,admin,admin,
1516,141259,1749,35650,642,0,N,N,N,CP_Drtn,TT_Task,DT_FixedDUR2,TK_NotStart,ENG-STR-BL3-APP210,3rd Floor  Beams,,1560,1560,112,0,0,0,112,14,0,14,,,,2015-01-26 08:00,2015-02-10 16:00,,2014-05-18 08:00,2014-06-02 16:00,2014-05-18 08:00,2014-06-02 16:00,2014-05-18 08:00,2014-06-02 16:00,2015-01-26 08:00,2015-02-10 16:00,,PT_Normal,,,,,Fut8XIXf50yUCJzpn7D7gA,DdCrxLxv1Eabbj7YL37MFA,,,N,0,0,,,2014-04-05 12:27,2014-04-05 13:21,admin,admin,
1517,141260,1749,35650,642,0,N,N,N,CP_Drtn,TT_Task,DT_FixedDUR2,TK_NotStart,ENG-STR-BL3-APP220,4th Floor Slab,,1696,1696,112,0,0,0,112,14,0,14,,,,2015-02-21 08:00,2015-03-08 16:00,,2014-05-24 08:00,2014-06-08 16:00,2014-05-24 08:00,2014-06-08 16:00,2014-05-24 08:00,2014-06-08 16:00,2015-02-21 08:00,2015-03-08 16:00,,PT_Normal,,,,,WOJ5+w72uESK+CZNsF3YOw,S7gN2xYBxk6Fhn+WeoJe8g,,,N,0,0,,,2014-04-05 12:27,2014-04-05 13:21,admin,admin,
1518,141261,1749,35650,642,0,N,N,N,CP_Drtn,TT_Task,DT_FixedDUR2,TK_NotStart,ENG-STR-BL3-APP230,4th Floor  Beams,,1696,1696,112,0,0,0,112,14,0,14,,,,2015-02-21 08:00,2015-03-08 16:00,,2014-05-24 08:00,2014-06-08 16:00,2014-05-24 08:00,2014-06-08 16:00,2014-05-24 08:00,2014-06-08 16:00,2015-02-21 08:00,2015-03-08 16:00,,PT_Normal,,,,,lYioVszJWE2R9gAQqOPTzQ,U8ArGgXthUCR5prYOf5HTA,,,N,0,0,,,2014-04-05 12:27,2014-04-05 13:21,admin,admin,
1519,141262,1749,35650,642,0,N,N,N,CP_Drtn,TT_Task,DT_FixedDUR2,TK_NotStart,ENG-STR-BL3-APP240,4th to 7th Walls,,1656,1656,112,0,0,0,112,14,0,14,,,,2015-02-21 08:00,2015-03-08 16:00,,2014-05-29 08:00,2014-06-14 16:00,2014-05-29 08:00,2014-06-14 16:00,2014-05-29 08:00,2014-06-14 16:00,2015-02-21 08:00,2015-03-08 16:00,,PT_Normal,,,,,1aJf6Te7xkyRRLRUUKzfqg,9LthLOfk30+yGqnUPxvu8w,,,N,0,0,,,2014-04-05 12:27,2014-04-05 13:21,admin,admin,
1520,141263,1749,35650,642,0,N,N,N,CP_Drtn,TT_Task,DT_FixedDUR2,TK_NotStart,ENG-STR-BL3-APP250,4th to 7th Columns,,1616,1616,112,0,0,0,112,14,0,14,,,,2015-02-21 08:00,2015-03-08 16:00,,2014-06-04 08:00,2014-06-21 16:00,2014-06-04 08:00,2014-06-21 16:00,2014-06-04 08:00,2014-06-21 16:00,2015-02-21 08:00,2015-03-08 16:00,,PT_Normal,,,,,kkr/0Wye1UeYb2lf7Rx+gA,MsjWqdygTkGQErdMAhxa5g,,,N,0,0,,,2014-04-05 12:27,2014-04-05 13:21,admin,admin,
1521,141264,1749,35650,642,0,N,N,N,CP_Drtn,TT_Task,DT_FixedDUR2,TK_NotStart,ENG-STR-BL3-APP260,4th to 7th Stairs,,1576,1576,112,0,0,0,112,14,0,14,,,,2015-02-21 08:00,2015-03-08 16:00,,2014-06-10 08:00,2014-06-26 16:00,2014-06-10 08:00,2014-06-26 16:00,2014-06-10 08:00,2014-06-26 16:00,2015-02-21 08:00,2015-03-08 16:00,,PT_Normal,,,,,uh10WeIUoEWrIo647AjGuw,OE68uNFH2EeQMOm+4h5loQ,,,N,0,0,,,2014-04-05 12:27,2014-04-05 13:21,admin,admin,
1522,141265,1749,35650,642,0,N,N,N,CP_Drtn,TT_Task,DT_FixedDUR2,TK_NotStart,ENG-STR-BL3-APP270,5th Floor Slab,,1712,1712,112,0,0,0,112,14,0,14,,,,2015-03-18 08:00,2015-04-02 16:00,,2014-06-16 08:00,2014-07-04 14:00,2014-06-16 08:00,2014-07-04 14:00,2014-06-16 08:00,2014-07-04 14:00,2015-03-18 08:00,2015-04-02 16:00,,PT_Normal,,,,,O3kayX9te0+yzrjpByXxEA,Yt4Rp5LTnUWFchhtR3RadQ,,,N,0,0,,,2014-04-05 12:27,2014-04-05 13:21,admin,admin,
1523,141266,1749,35650,642,0,N,N,N,CP_Drtn,TT_Task,DT_FixedDUR2,TK_NotStart,ENG-STR-BL3-APP280,5th Floor  Beams,,1712,1712,112,0,0,0,112,14,0,14,,,,2015-03-18 08:00,2015-04-02 16:00,,2014-06-16 08:00,2014-07-04 14:00,2014-06-16 08:00,2014-07-04 14:00,2014-06-16 08:00,2014-07-04 14:00,2015-03-18 08:00,2015-04-02 16:00,,PT_Normal,,,,,pyUuhszXvUOibqhU9X7DOQ,GWlyjRwCQE6X6kriEHVWlw,,,N,0,0,,,2014-04-05 12:27,2014-04-05 13:21,admin,admin,
1524,141267,1749,35650,642,0,N,N,N,CP_Drtn,TT_Task,DT_FixedDUR2,TK_NotStart,ENG-STR-BL3-APP290,6th Floor Slab,,1848,1848,112,0,0,0,112,14,0,14,,,,2015-04-13 08:00,2015-04-28 16:00,,2014-06-23 08:00,2014-07-14 14:00,2014-06-23 08:00,2014-07-14 14:00,2014-06-23 08:00,2014-07-14 14:00,2015-04-13 08:00,2015-04-28 16:00,,PT_Normal,,,,,4rdD/m5TakK4CvvNlY5Xsw,Rjgsj31nGESZisEr0iOU7g,,,N,0,0,,,2014-04-05 12:27,2014-04-05 13:21,admin,admin,
1525,141268,1749,35650,642,0,N,N,N,CP_Drtn,TT_Task,DT_FixedDUR2,TK_NotStart,ENG-STR-BL3-APP300,6th Floor  Beams,,1848,1848,112,0,0,0,112,14,0,14,,,,2015-04-13 08:00,2015-04-28 16:00,,2014-06-23 08:00,2014-07-14 14:00,2014-06-23 08:00,2014-07-14 14:00,2014-06-23 08:00,2014-07-14 14:00,2015-04-13 08:00,2015-04-28 16:00,,PT_Normal,,,,,pdp6z1rHmkqlNv4a1ivc1g,Jo88qPiVwEKf/tsesw4UMQ,,,N,0,0,,,2014-04-05 12:27,2014-04-05 13:21,admin,admin,
1526,141269,1749,35650,642,0,N,N,N,CP_Drtn,TT_Task,DT_FixedDUR2,TK_NotStart,ENG-STR-BL3-APP310,7th Floor Slab,,1984,1984,112,0,0,0,112,14,0,14,,,,2015-05-09 08:00,2015-05-24 16:00,,2014-06-29 08:00,2014-07-24 14:00,2014-06-29 08:00,2014-07-24 14:00,2014-06-29 08:00,2014-07-24 14:00,2015-05-09 08:00,2015-05-24 16:00,,PT_Normal,,,,,IL1jxQ5olkOsCz5Kx0myPQ,na7izb90NkSlRrHq4WZwpw,,,N,0,0,,,2014-04-05 12:27,2014-04-05 13:21,admin,admin,
1527,141270,1749,35650,642,0,N,N,N,CP_Drtn,TT_Task,DT_FixedDUR2,TK_NotStart,ENG-STR-BL3-APP320,7th Floor  Beams,,1984,1984,112,0,0,0,112,14,0,14,,,,2015-05-09 08:00,2015-05-24 16:00,,2014-06-29 08:00,2014-07-24 14:00,2014-06-29 08:00,2014-07-24 14:00,2014-06-29 08:00,2014-07-24 14:00,2015-05-09 08:00,2015-05-24 16:00,,PT_Normal,,,,,0FUqIi1ipUKJDZzd4F0uzA,WLODWmr+FEGvT8RQk4CA0g,,,N,0,0,,,2014-04-05 12:27,2014-04-05 13:21,admin,admin,
1528,141271,1749,35650,642,0,N,N,N,CP_Drtn,TT_Task,DT_FixedDUR2,TK_NotStart,ENG-STR-BL3-APP330,7th to 9th Walls,,1864,1864,112,0,0,0,112,14,0,14,,,,2015-05-09 08:00,2015-05-24 16:00,,2014-07-27 10:00,2014-08-14 16:00,2014-07-27 10:00,2014-08-14 16:00,2014-07-27 10:00,2014-08-14 16:00,2015-05-09 08:00,2015-05-24 16:00,,PT_Normal,,,,,00+NbVhF4kub7xFPyhBd+w,xWKTI1fxyU+WFy8762k+RA,,,N,0,0,,,2014-04-05 12:27,2014-04-05 13:21,admin,admin,
1529,141272,1749,35650,642,0,N,N,N,CP_Drtn,TT_Task,DT_FixedDUR2,TK_NotStart,ENG-STR-BL3-APP340,7th to 9th Columns,,1944,1944,112,0,0,0,112,14,0,14,,,,2015-05-09 08:00,2015-05-24 16:00,,2014-07-07 10:00,2014-08-03 16:00,2014-07-07 10:00,2014-08-03 16:00,2014-07-07 10:00,2014-08-03 16:00,2015-05-09 08:00,2015-05-24 16:00,,PT_Normal,,,,,+zFQZgqvOE2sHiazudFOzw,Y0Cq9UFRxkyU8m0ZkZHpdQ,,,N,0,0,,,2014-04-05 12:27,2014-04-05 13:21,admin,admin,
1530,141273,1749,35650,642,0,N,N,N,CP_Drtn,TT_Task,DT_FixedDUR2,TK_NotStart,ENG-STR-BL3-APP350,7th to 9th Stairs,,1904,1904,112,0,0,0,112,14,0,14,,,,2015-05-09 08:00,2015-05-24 16:00,,2014-07-17 10:00,2014-08-09 16:00,2014-07-17 10:00,2014-08-09 16:00,2014-07-17 10:00,2014-08-09 16:00,2015-05-09 08:00,2015-05-24 16:00,,PT_Normal,,,,,OE7RINVrkEGDXWHaFuPIbw,oCRLPLVBYkKpz1DmJAZaJQ,,,N,0,0,,,2014-04-05 12:27,2014-04-05 13:21,admin,admin,
1531,141274,1749,35650,642,0,N,N,N,CP_Drtn,TT_Task,DT_FixedDUR2,TK_NotStart,ENG-STR-BL3-APP360,8th Floor  Beams,,2040,2040,112,0,0,0,112,14,0,14,,,,2015-06-03 08:00,2015-06-16 16:00,,2014-07-27 10:00,2014-08-14 16:00,2014-07-27 10:00,2014-08-14 16:00,2014-07-27 10:00,2014-08-14 16:00,2015-06-03 08:00,2015-06-16 16:00,,PT_Normal,,,,,LWgVcZwU10Sc3LwO9jd1Bg,RePzKad0akmgxxVn9qb22Q,,,N,0,0,,,2014-04-05 12:27,2014-04-05 13:21,admin,admin,
1532,141275,1749,35650,642,0,N,N,N,CP_Drtn,TT_Task,DT_FixedDUR2,TK_NotStart,ENG-STR-BL3-APP370,8th Floor Slab,,2040,2040,112,0,0,0,112,14,0,14,,,,2015-06-03 08:00,2015-06-16 16:00,,2014-07-27 10:00,2014-08-14 16:00,2014-07-27 10:00,2014-08-14 16:00,2014-07-27 10:00,2014-08-14 16:00,2015-06-03 08:00,2015-06-16 16:00,,PT_Normal,,,,,Png5kWpCqUOP9QNcwIEBNg,ZJiIy2SlokGc6aMRikO4nw,,,N,0,0,,,2014-04-05 12:27,2014-04-05 13:21,admin,admin,
1533,141276,1749,35650,642,0,N,N,N,CP_Drtn,TT_Task,DT_FixedDUR2,TK_NotStart,ENG-STR-BL3-APP380,9th Floor  Beams,,2176,2176,112,0,0,0,112,14,0,14,,,,2015-06-25 08:00,2015-07-08 16:00,,2014-08-05 08:00,2014-08-20 16:00,2014-08-05 08:00,2014-08-20 16:00,2014-08-05 08:00,2014-08-20 16:00,2015-06-25 08:00,2015-07-08 16:00,,PT_Normal,,,,,TXhdkoCAu0O1YJWFR+OfOg,ez0R2klY40SqGHDNuyNHvA,,,N,0,0,,,2014-04-05 12:27,2014-04-05 13:21,admin,admin,
1534,141277,1749,35650,642,0,N,N,N,CP_Drtn,TT_Task,DT_FixedDUR2,TK_NotStart,ENG-STR-BL3-APP390,9th Floor Slab,,2176,2176,112,0,0,0,112,14,0,14,,,,2015-06-25 08:00,2015-07-08 16:00,,2014-08-05 08:00,2014-08-20 16:00,2014-08-05 08:00,2014-08-20 16:00,2014-08-05 08:00,2014-08-20 16:00,2015-06-25 08:00,2015-07-08 16:00,,PT_Normal,,,,,VGUOZSkz9kiXzS0HaL9CKQ,EA/9JirkH0OKFCgO+YgfWw,,,N,0,0,,,2014-04-05 12:27,2014-04-05 13:21,admin,admin,
1535,141278,1749,35650,642,0,N,N,N,CP_Drtn,TT_Task,DT_FixedDUR2,TK_NotStart,ENG-STR-BL3-APP400,9th to Roof Walls,,2136,2136,112,0,0,0,112,14,0,14,,,,2015-06-25 08:00,2015-07-08 16:00,,2014-08-11 08:00,2014-08-26 16:00,2014-08-11 08:00,2014-08-26 16:00,2014-08-11 08:00,2014-08-26 16:00,2015-06-25 08:00,2015-07-08 16:00,,PT_Normal,,,,,/x+CNZc3qUe7UAjiYr8Y/g,x2VrZFNpIEKdqKLjiW58eQ,,,N,0,0,,,2014-04-05 12:27,2014-04-05 13:21,admin,admin,
1536,141279,1749,35650,642,0,N,N,N,CP_Drtn,TT_Task,DT_FixedDUR2,TK_NotStart,ENG-STR-BL3-APP410,9th to Roof Columns,,2096,2096,112,0,0,0,112,14,0,14,,,,2015-06-25 08:00,2015-07-08 16:00,,2014-08-17 08:00,2014-09-01 16:00,2014-08-17 08:00,2014-09-01 16:00,2014-08-17 08:00,2014-09-01 16:00,2015-06-25 08:00,2015-07-08 16:00,,PT_Normal,,,,,YofLdmhcuEWctlgYhIIMXA,ERoYDxBxOkmC5ciH2V4o0Q,,,N,0,0,,,2014-04-05 12:27,2014-04-05 13:21,admin,admin,
1537,141280,1749,35650,642,0,N,N,N,CP_Drtn,TT_Task,DT_FixedDUR2,TK_NotStart,ENG-STR-BL3-APP420,9th to Roof Stairs,,2056,2056,112,0,0,0,112,14,0,14,,,,2015-06-25 08:00,2015-07-08 16:00,,2014-08-23 08:00,2014-09-07 16:00,2014-08-23 08:00,2014-09-07 16:00,2014-08-23 08:00,2014-09-07 16:00,2015-06-25 08:00,2015-07-08 16:00,,PT_Normal,,,,,Kr2ee6QPY0e9f/oro8K7YA,FKBAXP3ee0+bF/YUEUK/jA,,,N,0,0,,,2014-04-05 12:27,2014-04-05 13:21,admin,admin,
1538,141281,1749,35650,642,0,N,N,N,CP_Drtn,TT_Task,DT_FixedDUR2,TK_NotStart,ENG-STR-BL3-APP430,10th Floor  Beams,,2192,2192,112,0,0,0,112,14,0,14,,,,2015-07-17 08:00,2015-07-30 16:00,,2014-08-28 08:00,2014-09-13 16:00,2014-08-28 08:00,2014-09-13 16:00,2014-08-28 08:00,2014-09-13 16:00,2015-07-17 08:00,2015-07-30 16:00,,PT_Normal,,,,,+6tzKb0dlUW+UQgXPuHHrA,iwINYD3prEOUVC/3xNNbpQ,,,N,0,0,,,2014-04-05 12:27,2014-04-05 13:21,admin,admin,
1539,141282,1749,35650,642,0,N,N,N,CP_Drtn,TT_Task,DT_FixedDUR2,TK_NotStart,ENG-STR-BL3-APP440,10th Floor Slab,,2192,2192,112,0,0,0,112,14,0,14,,,,2015-07-17 08:00,2015-07-30 16:00,,2014-08-28 08:00,2014-09-13 16:00,2014-08-28 08:00,2014-09-13 16:00,2014-08-28 08:00,2014-09-13 16:00,2015-07-17 08:00,2015-07-30 16:00,,PT_Normal,,,,,7hBGIYhbCEWKrVraK6WSYg,G2YBmbbtE0qOp6QXQXyiKw,,,N,0,0,,,2014-04-05 12:27,2014-04-05 13:21,admin,admin,
1540,141283,1749,35650,642,0,N,N,N,CP_Drtn,TT_Task,DT_FixedDUR2,TK_NotStart,ENG-STR-BL3-APP450,11th Floor  Beams,,2328,2328,112,0,0,0,112,14,0,14,,,,2015-08-08 08:00,2015-08-21 16:00,,2014-09-03 08:00,2014-09-18 16:00,2014-09-03 08:00,2014-09-18 16:00,2014-09-03 08:00,2014-09-18 16:00,2015-08-08 08:00,2015-08-21 16:00,,PT_Normal,,,,,YlSQVj5XFUCBPOs2NJWlcQ,Xwl/Xm8pRk6dbPHh0PesbA,,,N,0,0,,,2014-04-05 12:27,2014-04-05 13:21,admin,admin,
1541,141284,1749,35650,642,0,N,N,N,CP_Drtn,TT_Task,DT_FixedDUR2,TK_NotStart,ENG-STR-BL3-APP460,11th Floor Slab,,2328,2328,112,0,0,0,112,14,0,14,,,,2015-08-08 08:00,2015-08-21 16:00,,2014-09-03 08:00,2014-09-18 16:00,2014-09-03 08:00,2014-09-18 16:00,2014-09-03 08:00,2014-09-18 16:00,2015-08-08 08:00,2015-08-21 16:00,,PT_Normal,,,,,Xk5VHSh4tUKFxHoO7KLzhw,BQO3mOBsSU+w0PktU6GXEQ,,,N,0,0,,,2014-04-05 12:27,2014-04-05 13:21,admin,admin,
1542,141285,1749,35650,642,0,N,N,N,CP_Drtn,TT_Task,DT_FixedDUR2,TK_NotStart,ENG-STR-BL3-APP470,Roof Floor  Beams,,2288,2288,112,0,0,0,112,14,0,14,,,,2015-08-08 08:00,2015-08-21 16:00,,2014-09-09 08:00,2014-09-24 16:00,2014-09-09 08:00,2014-09-24 16:00,2014-09-09 08:00,2014-09-24 16:00,2015-08-08 08:00,2015-08-21 16:00,,PT_Normal,,,,,xghDjH+OlECg0hUM/nen0A,8AOtdu4EokO3NxK9jKMdfA,,,N,0,0,,,2014-04-05 12:27,2014-04-05 13:21,admin,admin,
1543,141286,1749,35650,642,0,N,N,N,CP_Drtn,TT_Task,DT_FixedDUR2,TK_NotStart,ENG-STR-BL3-APP480,Roof Floor Slab,,2288,2288,112,0,0,0,112,14,0,14,,,,2015-08-08 08:00,2015-08-21 16:00,,2014-09-09 08:00,2014-09-24 16:00,2014-09-09 08:00,2014-09-24 16:00,2014-09-09 08:00,2014-09-24 16:00,2015-08-08 08:00,2015-08-21 16:00,,PT_Normal,,,,,TbSAbp4Wm0SX7u8xXnArHQ,sYd0KF3F9UiJ1cVlWeW53g,,,N,0,0,,,2014-04-05 12:27,2014-04-05 13:21,admin,admin,
1544,141287,1749,35855,1449,0,N,N,N,CP_Drtn,TT_Task,DT_FixedDUR2,TK_NotStart,OFF-ENG-MEP-DR1010,"2nd Basement  Drainage Layout Submittal (Block 1,2,3)",,1768,0,112,0,0,0,112,14,0,14,,,,2014-12-30 08:00,2015-01-14 16:00,,2014-04-16 08:00,2014-05-01 16:00,2014-04-16 08:00,2014-05-01 16:00,2014-04-16 08:00,2014-05-01 16:00,2014-12-30 08:00,2015-01-14 16:00,,PT_Normal,,,,,9ftVJoB0gUqMo+BDA248rQ,DrpkoGmhPE+vIW/Hns1zGQ,,,N,0,0,,,2014-04-05 12:27,2014-04-05 13:21,admin,admin,
1545,141288,1749,35855,1449,0,N,N,N,CP_Drtn,TT_Task,DT_FixedDUR2,TK_NotStart,OFF-ENG-MEP-DR1020,"1st Basement Drainage Layout Submittal (Block 1,2,3)",,1768,0,112,0,0,0,112,14,0,14,,,,2015-01-15 08:00,2015-01-31 16:00,,2014-05-03 08:00,2014-05-18 16:00,2014-05-03 08:00,2014-05-18 16:00,2014-05-03 08:00,2014-05-18 16:00,2015-01-15 08:00,2015-01-31 16:00,,PT_Normal,,,,,OCFky2RelU6VnI7aFF7DJw,axpYZLry/UqYuu30RIZThA,,,N,0,0,,,2014-04-05 12:27,2014-04-05 13:21,admin,admin,
1546,141289,1749,35855,1449,0,N,N,N,CP_Drtn,TT_Task,DT_FixedDUR2,TK_NotStart,OFF-ENG-MEP-DR1030,"Ground Floor Drainage Layout Submittal (Block 1,2,3)",,1240,0,112,0,0,0,112,14,0,14,,,,2015-02-01 08:00,2015-02-16 16:00,,2014-08-04 08:00,2014-08-19 16:00,2014-08-04 08:00,2014-08-19 16:00,2014-08-04 08:00,2014-08-19 16:00,2015-02-01 08:00,2015-02-16 16:00,,PT_Normal,,,,,6WXJaAA0EkqxvMxdpIr3og,riifqU5mX0OomzjWr0D7/w,,,N,0,0,,,2014-04-05 12:27,2014-04-05 13:21,admin,admin,
1547,141290,1749,35855,1449,0,N,N,N,CP_Drtn,TT_Task,DT_FixedDUR2,TK_NotStart,OFF-ENG-MEP-DR1040,Level 1 to Level 7  Block [1]  Drainage Layout Submittal,,1240,0,112,0,0,0,112,14,0,14,,,,2015-02-17 08:00,2015-03-04 16:00,,2014-08-20 08:00,2014-09-04 16:00,2014-08-20 08:00,2014-09-04 16:00,2014-08-20 08:00,2014-09-04 16:00,2015-02-17 08:00,2015-03-04 16:00,,PT_Normal,,,,,ZNFLNu62sEW56ni6DvMnLw,XPMqVur1yUeImG54uP8Sfg,,,N,0,0,,,2014-04-05 12:27,2014-04-05 13:21,admin,admin,
1548,141291,1749,35855,1449,0,N,N,N,CP_Drtn,TT_Task,DT_FixedDUR2,TK_NotStart,OFF-ENG-MEP-DR1050,Level 1 to Level 9  Block [2]  Drainage Layout Submittal,,1240,0,112,0,0,0,112,14,0,14,,,,2015-03-05 08:00,2015-03-21 16:00,,2014-09-06 08:00,2014-09-21 16:00,2014-09-06 08:00,2014-09-21 16:00,2014-09-06 08:00,2014-09-21 16:00,2015-03-05 08:00,2015-03-21 16:00,,PT_Normal,,,,,bkeugtoRuEOjOQUICwo7wQ,4GoiWHqUY0mRdZadLF+oUw,,,N,0,0,,,2014-04-05 12:27,2014-04-05 13:21,admin,admin,
1549,141292,1749,35855,1449,0,N,N,N,CP_Drtn,TT_Task,DT_FixedDUR2,TK_NotStart,OFF-ENG-MEP-DR1060,Level 1 to Level 11  Block [3]  Drainage Layout Submittal,,1240,0,112,0,0,0,112,14,0,14,,,,2015-03-22 08:00,2015-04-06 16:00,,2014-09-22 08:00,2014-10-07 16:00,2014-09-22 08:00,2014-10-07 16:00,2014-09-22 08:00,2014-10-07 16:00,2015-03-22 08:00,2015-04-06 16:00,,PT_Normal,,,,,uav2prB9FEOo3VjAvNEyaw,Dl7dfFk3Yk2MpwEGWb1gbQ,,,N,0,0,,,2014-04-05 12:27,2014-04-05 13:21,admin,admin,
1550,141293,1749,35855,1449,0,N,N,N,CP_Drtn,TT_Task,DT_FixedDUR2,TK_NotStart,OFF-ENG-MEP-DR1070,"Drainage Schematic Layout and Riser Diagram Block  ( 1,2,3 ) Submittal",,2728,0,112,0,0,0,112,14,0,14,,,,2015-11-10 08:00,2015-11-25 16:00,,2014-10-08 08:00,2014-10-23 16:00,2014-10-08 08:00,2014-10-23 16:00,2014-10-08 08:00,2014-10-23 16:00,2015-11-10 08:00,2015-11-25 16:00,,PT_Normal,,,,,UOca+d6hqEencOUIxcWotg,tdncWrzCe0e5kXiYVqulsQ,,,N,0,0,,,2014-04-05 12:27,2014-04-05 13:21,admin,admin,
1551,141294,1749,35855,1449,0,N,N,N,CP_Drtn,TT_Task,DT_FixedDUR2,TK_NotStart,OFF-ENG-MEP-DR1080,"Drainage Typical Installation Details Layout Block  ( 1,2,3 ) Submittal",,2728,0,112,0,0,0,112,14,0,14,,,,2015-11-26 08:00,2015-12-12 16:00,,2014-10-25 08:00,2014-11-09 16:00,2014-10-25 08:00,2014-11-09 16:00,2014-10-25 08:00,2014-11-09 16:00,2015-11-26 08:00,2015-12-12 16:00,,PT_Normal,,,,,PmrGYUDxa0m52KAt6P3SHQ,5WuUXWa6/kOT4fbeZwSOWQ,,,N,0,0,,,2014-04-05 12:27,2014-04-05 13:21,admin,admin,
1552,141295,1749,35855,1449,0,N,N,N,CP_Drtn,TT_Task,DT_FixedDUR2,TK_NotStart,OFF-ENG-MEP-DR1000,"Raft Under Ground Drainage Layout Block (1,2,3) Submittal",,144,0,112,0,0,0,112,14,0,14,,,,2014-02-22 08:00,2014-03-09 16:00,,2014-02-01 08:00,2014-02-16 16:00,2014-02-01 08:00,2014-02-16 16:00,2014-02-01 08:00,2014-02-16 16:00,2014-02-22 08:00,2014-03-09 16:00,,PT_Normal,,,,,16C9pQPcWUWvn44y91ah4w,wtgj+Q2SG0aEDE/XmDjjuw,,,N,0,0,,,2014-04-05 12:27,2014-04-05 13:21,admin,admin,
1553,141296,1749,35883,1449,0,N,N,N,CP_Drtn,TT_Task,DT_FixedDUR2,TK_NotStart,OFF-ENG-MEP-DR1100,"2nd Basement  Drainage Layout Approval  (Block 1,2,3)",,1792,672,112,0,0,0,112,14,0,14,,,,2015-01-19 08:00,2015-02-03 16:00,,2014-05-03 08:00,2014-05-18 16:00,2014-05-03 08:00,2014-05-18 16:00,2014-05-03 08:00,2014-05-18 16:00,2015-01-19 08:00,2015-02-03 16:00,,PT_Normal,,,,,qN1OKiQaq0O5I7zeqz3vIw,prsqYHMhoEiFcn8fH+o1ZQ,,,N,0,0,,,2014-04-05 12:27,2014-04-05 13:21,admin,admin,
1554,141297,1749,35883,1449,0,N,N,N,CP_Drtn,TT_Task,DT_FixedDUR2,TK_NotStart,OFF-ENG-MEP-DR1110,"1st Basement Drainage Layout Approval  (Block 1,2,3)",,1848,928,112,0,0,0,112,14,0,14,,,,2015-02-12 08:00,2015-02-28 16:00,,2014-05-19 08:00,2014-06-03 16:00,2014-05-19 08:00,2014-06-03 16:00,2014-05-19 08:00,2014-06-03 16:00,2015-02-12 08:00,2015-02-28 16:00,,PT_Normal,,,,,gXT2PGBlH0mj8E8eazDf4A,fYB49PKPQ0ewhcDyqLXxeA,,,N,0,0,,,2014-04-05 12:27,2014-04-05 13:21,admin,admin,
1555,141298,1749,35883,1449,0,N,N,N,CP_Drtn,TT_Task,DT_FixedDUR2,TK_NotStart,OFF-ENG-MEP-DR1120,"Ground Floor Drainage Layout Approval  (Block 1,2,3)",,1368,832,112,0,0,0,112,14,0,14,,,,2015-03-08 08:00,2015-03-23 16:00,,2014-08-20 08:00,2014-09-04 16:00,2014-08-20 08:00,2014-09-04 16:00,2014-08-20 08:00,2014-09-04 16:00,2015-03-08 08:00,2015-03-23 16:00,,PT_Normal,,,,,cPlizqfXyEyM/XxrNtvGEg,UEO48HPAlkaaGlrwHmA/xg,,,N,0,0,,,2014-04-05 12:27,2014-04-05 13:21,admin,admin,
1556,141299,1749,35883,1449,0,N,N,N,CP_Drtn,TT_Task,DT_FixedDUR2,TK_NotStart,OFF-ENG-MEP-DR1130,Level 1 to Level 7  Block [1]  Drainage Layout Approval,,1808,736,112,0,0,0,112,14,0,14,,,,2015-05-27 08:00,2015-06-11 16:00,,2014-09-06 08:00,2014-09-21 16:00,2014-09-06 08:00,2014-09-21 16:00,2014-09-06 08:00,2014-09-21 16:00,2015-05-27 08:00,2015-06-11 16:00,,PT_Normal,,,,,PSQ1MUt1Dk+AkUW7WOLfhg,qk2gMiBpdESbSmHRK2qZww,,,N,0,0,,,2014-04-05 12:27,2014-04-05 13:21,admin,admin,
1557,141300,1749,35883,1449,0,N,N,N,CP_Drtn,TT_Task,DT_FixedDUR2,TK_NotStart,OFF-ENG-MEP-DR1140,Level 1 to Level 9  Block [2]  Drainage Layout Approval,,1312,880,112,0,0,0,112,14,0,14,,,,2015-04-01 08:00,2015-04-16 16:00,,2014-09-22 08:00,2014-10-07 16:00,2014-09-22 08:00,2014-10-07 16:00,2014-09-22 08:00,2014-10-07 16:00,2015-04-01 08:00,2015-04-16 16:00,,PT_Normal,,,,,NLbwSdtVok+fpBxbRplidQ,VCoiA3v9g0KYipE1NENI/A,,,N,0,0,,,2014-04-05 12:27,2014-04-05 13:21,admin,admin,
1558,141301,1749,35883,1449,0,N,N,N,CP_Drtn,TT_Task,DT_FixedDUR2,TK_NotStart,OFF-ENG-MEP-DR1150,Level 1 to Level 11  Block [3]  Drainage Layout Approval,,1240,1048,112,0,0,0,112,14,0,14,,,,2015-04-07 08:00,2015-04-22 16:00,,2014-10-08 08:00,2014-10-23 16:00,2014-10-08 08:00,2014-10-23 16:00,2014-10-08 08:00,2014-10-23 16:00,2015-04-07 08:00,2015-04-22 16:00,,PT_Normal,,,,,5nUvFe2oi0iN31Bs+14Ozg,8vJMZmEEbUO+KXn415byhQ,,,N,0,0,,,2014-04-05 12:27,2014-04-05 13:21,admin,admin,
1559,141302,1749,35883,1449,0,N,N,N,CP_Drtn,TT_Task,DT_FixedDUR2,TK_NotStart,OFF-ENG-MEP-DR1160,"Drainage Schematic Layout and Riser Diagram Block  ( 1,2,3 ) Approval",,2840,1680,112,0,0,0,112,14,0,14,,,,2015-12-13 08:00,2015-12-28 16:00,,2014-10-25 08:00,2014-11-09 16:00,2014-10-25 08:00,2014-11-09 16:00,2014-10-25 08:00,2014-11-09 16:00,2015-12-13 08:00,2015-12-28 16:00,,PT_Normal,,,,,D+HbNATpxE6yLoG1Bh0y6Q,IlyMCFVZPEevAu374dPdaA,,,N,0,0,,,2014-04-05 12:27,2014-04-05 13:21,admin,admin,
1560,141303,1749,35883,1449,0,N,N,N,CP_Drtn,TT_Task,DT_FixedDUR2,TK_NotStart,OFF-ENG-MEP-DR1170,"Drainage Typical Installation Details Layout Block  ( 1,2,3 ) Approval",,2728,1568,112,0,0,0,112,14,0,14,,,,2015-12-13 08:00,2015-12-28 16:00,,2014-11-10 08:00,2014-11-25 16:00,2014-11-10 08:00,2014-11-25 16:00,2014-11-10 08:00,2014-11-25 16:00,2015-12-13 08:00,2015-12-28 16:00,,PT_Normal,,,,,so2G1w2BT0OvLpa+6mfkww,qgK7P4QxDk6DdlJjXM5lqg,,,N,0,0,,,2014-04-05 12:27,2014-04-05 13:21,admin,admin,
1561,141304,1749,35883,1449,0,N,N,N,CP_Drtn,TT_Task,DT_FixedDUR2,TK_NotStart,OFF-ENG-MEP-DR1090,"Raft Under Ground Drainage Layout Block (1,2,3) Approval",,144,144,112,0,0,0,112,14,0,14,,,,2014-03-10 08:00,2014-03-25 16:00,,2014-02-17 08:00,2014-03-04 16:00,2014-02-17 08:00,2014-03-04 16:00,2014-02-17 08:00,2014-03-04 16:00,2014-03-10 08:00,2014-03-25 16:00,,PT_Normal,,,,,meWw0h2830uA90Ppw7gBXA,wPB3d9p6ukm3YfG7tR7rgA,,,N,0,0,,,2014-04-05 12:27,2014-04-05 13:21,admin,admin,
1562,141305,1749,35907,1449,0,N,N,N,CP_Drtn,TT_Task,DT_FixedDUR2,TK_NotStart,OFF-ENG-MEP-AC1000,"2nd Basement  HVAC Layout Submittal (Block 1,2,3)",,1472,0,112,0,0,0,112,14,0,14,,,,2014-11-17 08:00,2014-12-02 16:00,,2014-04-16 08:00,2014-05-01 16:00,2014-04-16 08:00,2014-05-01 16:00,2014-04-16 08:00,2014-05-01 16:00,2014-11-17 08:00,2014-12-02 16:00,,PT_Normal,,,,,dLaNjcfsAU2A+B6ORMAkoQ,IgnPs1WwsUqecL8lLjRWPg,,,N,0,0,,,2014-04-05 12:27,2014-04-05 13:21,admin,admin,
1563,141306,1749,35907,1449,0,N,N,N,CP_Drtn,TT_Task,DT_FixedDUR2,TK_NotStart,OFF-ENG-MEP-AC1010,"1st Basement HVAC Layout Submittal (Block 1,2,3)",,1472,0,112,0,0,0,112,14,0,14,,,,2014-12-03 08:00,2014-12-18 16:00,,2014-05-03 08:00,2014-05-18 16:00,2014-05-03 08:00,2014-05-18 16:00,2014-05-03 08:00,2014-05-18 16:00,2014-12-03 08:00,2014-12-18 16:00,,PT_Normal,,,,,mITM8Xs3cUONat2mraaKyA,g4Q/xcGozEOidmBp+tGhNQ,,,N,0,0,,,2014-04-05 12:27,2014-04-05 13:21,admin,admin,
1564,141307,1749,35907,1449,0,N,N,N,CP_Drtn,TT_Task,DT_FixedDUR2,TK_NotStart,OFF-ENG-MEP-AC1020,"Ground Floor HVAC Layout Submittal (Block 1,2,3)",,944,0,112,0,0,0,112,14,0,14,,,,2014-12-20 08:00,2015-01-04 16:00,,2014-08-04 08:00,2014-08-19 16:00,2014-08-04 08:00,2014-08-19 16:00,2014-08-04 08:00,2014-08-19 16:00,2014-12-20 08:00,2015-01-04 16:00,,PT_Normal,,,,,yOHOoTJHeUOzDYPovnZtyw,O6xlb/P01U2Vas0iXMQJgw,,,N,0,0,,,2014-04-05 12:27,2014-04-05 13:21,admin,admin,
1565,141308,1749,35907,1449,0,N,N,N,CP_Drtn,TT_Task,DT_FixedDUR2,TK_NotStart,OFF-ENG-MEP-AC1030,Level 1 to Level 6  Block [1]  HVAC Layout Submittal,,944,0,112,0,0,0,112,14,0,14,,,,2015-01-05 08:00,2015-01-20 16:00,,2014-08-20 08:00,2014-09-04 16:00,2014-08-20 08:00,2014-09-04 16:00,2014-08-20 08:00,2014-09-04 16:00,2015-01-05 08:00,2015-01-20 16:00,,PT_Normal,,,,,wZR5w7Pg80aVnIW2xtRACQ,cFWbk/l330uGI2rxlqd3Xg,,,N,0,0,,,2014-04-05 12:27,2014-04-05 13:21,admin,admin,
1566,141309,1749,35907,1449,0,N,N,N,CP_Drtn,TT_Task,DT_FixedDUR2,TK_NotStart,OFF-ENG-MEP-AC1050,Level 1 to Level 8  Block [2]  HVAC Layout Submittal,,944,0,112,0,0,0,112,14,0,14,,,,2015-02-07 08:00,2015-02-22 16:00,,2014-09-22 08:00,2014-10-07 16:00,2014-09-22 08:00,2014-10-07 16:00,2014-09-22 08:00,2014-10-07 16:00,2015-02-07 08:00,2015-02-22 16:00,,PT_Normal,,,,,eotBy2lDNk+iSDEDSm6GJw,eJEKJn6LV0+cnNQMwRfiIg,,,N,0,0,,,2014-04-05 12:27,2014-04-05 13:21,admin,admin,
1567,141310,1749,35907,1449,0,N,N,N,CP_Drtn,TT_Task,DT_FixedDUR2,TK_NotStart,OFF-ENG-MEP-AC1070,Level 1 to Level 10  Block [3]  HVAC Layout Submittal,,944,0,112,0,0,0,112,14,0,14,,,,2015-03-11 08:00,2015-03-26 16:00,,2014-10-25 08:00,2014-11-09 16:00,2014-10-25 08:00,2014-11-09 16:00,2014-10-25 08:00,2014-11-09 16:00,2015-03-11 08:00,2015-03-26 16:00,,PT_Normal,,,,,Bndauud9GEa7GRLXVjc6mg,N4E2AMc2TE2PACfqbv1pvw,,,N,0,0,,,2014-04-05 12:27,2014-04-05 13:21,admin,admin,
1568,141311,1749,35907,1449,0,N,N,N,CP_Drtn,TT_Task,DT_FixedDUR2,TK_NotStart,OFF-ENG-MEP-AC1090,"HVAC Schematic Layout and Riser Diagram (Piping ) Block  ( 1,2,3 ) Submittal",,2272,0,112,0,0,0,112,14,0,14,,,,2015-10-24 08:00,2015-11-08 16:00,,2014-11-26 08:00,2014-12-11 16:00,2014-11-26 08:00,2014-12-11 16:00,2014-11-26 08:00,2014-12-11 16:00,2015-10-24 08:00,2015-11-08 16:00,,PT_Normal,,,,,0CeflsTmi0Sg6hzGRshAFA,ATVgDEG0FEeD9/s9EwOaNw,,,N,0,0,,,2014-04-05 12:27,2014-04-05 13:21,admin,admin,
1569,141312,1749,35907,1449,0,N,N,N,CP_Drtn,TT_Task,DT_FixedDUR2,TK_NotStart,OFF-ENG-MEP-AC1100,"Wet Area Extract Riser Diagram Block  ( 1,2,3 ) Submittal",,2272,0,112,0,0,0,112,14,0,14,,,,2015-11-09 08:00,2015-11-24 16:00,,2014-12-13 08:00,2014-12-28 16:00,2014-12-13 08:00,2014-12-28 16:00,2014-12-13 08:00,2014-12-28 16:00,2015-11-09 08:00,2015-11-24 16:00,,PT_Normal,,,,,ZLFI4wBQuUqx+urgiLcNqA,c8ZmWYDIA0WfjLU3IEM4vg,,,N,0,0,,,2014-04-05 12:27,2014-04-05 13:21,admin,admin,
1570,141313,1749,35907,1449,0,N,N,N,CP_Drtn,TT_Task,DT_FixedDUR2,TK_NotStart,OFF-ENG-MEP-AC1110,"Fresh Air and Extract Air for Basement Ventilation Block  ( 1,2,3 ) Submittal",,2272,0,112,0,0,0,112,14,0,14,,,,2015-11-25 08:00,2015-12-10 16:00,,2014-12-29 08:00,2015-01-13 16:00,2014-12-29 08:00,2015-01-13 16:00,2014-12-29 08:00,2015-01-13 16:00,2015-11-25 08:00,2015-12-10 16:00,,PT_Normal,,,,,44IKt2yUAEKdvr2quav2OA,k6VTu4xOD0SByu1w6vXECw,,,N,0,0,,,2014-04-05 12:27,2014-04-05 13:21,admin,admin,
1571,141314,1749,35907,1449,0,N,N,N,CP_Drtn,TT_Task,DT_FixedDUR2,TK_NotStart,OFF-ENG-MEP-AC1120,"HVAC Typical Installation Details Layout Block  ( 1,2,3 ) Submittal",,2272,0,112,0,0,0,112,14,0,14,,,,2015-12-12 08:00,2015-12-27 16:00,,2015-01-14 08:00,2015-01-29 16:00,2015-01-14 08:00,2015-01-29 16:00,2015-01-14 08:00,2015-01-29 16:00,2015-12-12 08:00,2015-12-27 16:00,,PT_Normal,,,,,7+qJlZlKukK8cNiUZ+PYwQ,q6nLyxJ/T06ynif6NNttNw,,,N,0,0,,,2014-04-05 12:27,2014-04-05 13:21,admin,admin,
1572,141315,1749,35907,1449,0,N,N,N,CP_Drtn,TT_Task,DT_FixedDUR2,TK_NotStart,OFF-ENG-MEP-AC1040,Level 7  Block [1]  HVAC Layout Submittal,,944,0,112,0,0,0,112,14,0,14,,,,2015-01-21 08:00,2015-02-05 16:00,,2014-09-06 08:00,2014-09-21 16:00,2014-09-06 08:00,2014-09-21 16:00,2014-09-06 08:00,2014-09-21 16:00,2015-01-21 08:00,2015-02-05 16:00,,PT_Normal,,,,,+melIcUXikyNznrwnRKrXg,km8dHizzqUmqE1Xxj118cw,,,N,0,0,,,2014-04-05 12:27,2014-04-05 13:21,admin,admin,
1573,141316,1749,35907,1449,0,N,N,N,CP_Drtn,TT_Task,DT_FixedDUR2,TK_NotStart,OFF-ENG-MEP-AC1060,Level 9  Block [2]  HVAC Layout Submittal,,944,0,112,0,0,0,112,14,0,14,,,,2015-02-23 08:00,2015-03-10 16:00,,2014-10-08 08:00,2014-10-23 16:00,2014-10-08 08:00,2014-10-23 16:00,2014-10-08 08:00,2014-10-23 16:00,2015-02-23 08:00,2015-03-10 16:00,,PT_Normal,,,,,wusrq+4yTUiQXFFcjdvoVQ,lzSukCbPfEyQ4f4TEaLKow,,,N,0,0,,,2014-04-05 12:27,2014-04-05 13:21,admin,admin,
1574,141317,1749,35907,1449,0,N,N,N,CP_Drtn,TT_Task,DT_FixedDUR2,TK_NotStart,OFF-ENG-MEP-AC1080,Level 11  Block [1]  HVAC Layout Submittal,,2272,0,112,0,0,0,112,14,0,14,,,,2015-10-07 08:00,2015-10-22 16:00,,2014-11-10 08:00,2014-11-25 16:00,2014-11-10 08:00,2014-11-25 16:00,2014-11-10 08:00,2014-11-25 16:00,2015-10-07 08:00,2015-10-22 16:00,,PT_Normal,,,,,NAONZcC1L0yZLf+6XwA4Zg,acoKAdN9X0iLDeWE3se7sg,,,N,0,0,,,2014-04-05 12:27,2014-04-05 13:21,admin,admin,
1575,141318,1749,35831,1449,0,N,N,N,CP_Drtn,TT_Task,DT_FixedDUR2,TK_NotStart,OFF-ENG-MEP-AC1130,"2nd Basement  HVAC Layout Approval  (Block 1,2,3)",,1760,672,112,0,0,0,112,14,0,14,,,,2015-01-14 08:00,2015-01-29 16:00,,2014-05-03 08:00,2014-05-18 16:00,2014-05-03 08:00,2014-05-18 16:00,2014-05-03 08:00,2014-05-18 16:00,2015-01-14 08:00,2015-01-29 16:00,,PT_Normal,,,,,LheL+bGjJEmZWBJjUZdhhw,w0BHl5YjsUWZ8SFUt602Sg,,,N,0,0,,,2014-04-05 12:27,2014-04-05 13:21,admin,admin,
1576,141319,1749,35831,1449,0,N,N,N,CP_Drtn,TT_Task,DT_FixedDUR2,TK_NotStart,OFF-ENG-MEP-AC1140,"1st Basement HVAC Layout Approval  (Block 1,2,3)",,1816,928,112,0,0,0,112,14,0,14,,,,2015-02-08 08:00,2015-02-23 16:00,,2014-05-19 08:00,2014-06-03 16:00,2014-05-19 08:00,2014-06-03 16:00,2014-05-19 08:00,2014-06-03 16:00,2015-02-08 08:00,2015-02-23 16:00,,PT_Normal,,,,,vAMfgeTOikmG/479+Y/pnQ,TgXVHkW3RkKAQFQrzMKASg,,,N,0,0,,,2014-04-05 12:27,2014-04-05 13:21,admin,admin,
1577,141320,1749,35831,1449,0,N,N,N,CP_Drtn,TT_Task,DT_FixedDUR2,TK_NotStart,OFF-ENG-MEP-AC1150,"Ground Floor HVAC Layout Approval  (Block 1,2,3)",,1336,640,112,0,0,0,112,14,0,14,,,,2015-03-03 08:00,2015-03-18 16:00,,2014-08-20 08:00,2014-09-04 16:00,2014-08-20 08:00,2014-09-04 16:00,2014-08-20 08:00,2014-09-04 16:00,2015-03-03 08:00,2015-03-18 16:00,,PT_Normal,,,,,rUKVKbwCKkGnEMVKUb01oA,9BsAlzIYBUe9DTNYujhLEg,,,N,0,0,,,2014-04-05 12:27,2014-04-05 13:21,admin,admin,
1578,141321,1749,35831,1449,0,N,N,N,CP_Drtn,TT_Task,DT_FixedDUR2,TK_NotStart,OFF-ENG-MEP-AC1160,Level 1 to Level 6  Block [1]  HVAC Layout Approval,,1912,736,112,0,0,0,112,14,0,14,,,,2015-06-11 08:00,2015-06-27 16:00,,2014-09-06 08:00,2014-09-21 16:00,2014-09-06 08:00,2014-09-21 16:00,2014-09-06 08:00,2014-09-21 16:00,2015-06-11 08:00,2015-06-27 16:00,,PT_Normal,,,,,9FKj5Ljqk0OblKSP8mTRYg,I60XpdLexU6VXx2P2ktIjA,,,N,0,0,,,2014-04-05 12:27,2014-04-05 13:21,admin,admin,
1579,141322,1749,35831,1449,0,N,N,N,CP_Drtn,TT_Task,DT_FixedDUR2,TK_NotStart,OFF-ENG-MEP-AC1180,Level 1 to Level 8  Block [2]  HVAC Layout Approval,,1352,696,112,0,0,0,112,14,0,14,,,,2015-04-23 08:00,2015-05-09 16:00,,2014-10-08 08:00,2014-10-23 16:00,2014-10-08 08:00,2014-10-23 16:00,2014-10-08 08:00,2014-10-23 16:00,2015-04-23 08:00,2015-05-09 16:00,,PT_Normal,,,,,5XBvf4QLC0mK0H4i2yHmsQ,IYI0QrvpwUi8F7PWDNq+1Q,,,N,0,0,,,2014-04-05 12:27,2014-04-05 13:21,admin,admin,
1580,141323,1749,35831,1449,0,N,N,N,CP_Drtn,TT_Task,DT_FixedDUR2,TK_NotStart,OFF-ENG-MEP-AC1200,Level 1 to Level 10  Block [3]  HVAC Layout Approval,,944,824,112,0,0,0,112,14,0,14,,,,2015-03-28 08:00,2015-04-12 16:00,,2014-11-10 08:00,2014-11-25 16:00,2014-11-10 08:00,2014-11-25 16:00,2014-11-10 08:00,2014-11-25 16:00,2015-03-28 08:00,2015-04-12 16:00,,PT_Normal,,,,,4k6fCRXE0U2J5JwK2rGMDA,3M3SVS2vUEynzDxyfzPKMQ,,,N,0,0,,,2014-04-05 12:27,2014-04-05 13:21,admin,admin,
1581,141324,1749,35831,1449,0,N,N,N,CP_Drtn,TT_Task,DT_FixedDUR2,TK_NotStart,OFF-ENG-MEP-AC1220,"HVAC Schematic Layout and Riser Diagram (Piping ) Block  ( 1,2,3 ) Approval",,2576,1384,112,0,0,0,112,14,0,14,,,,2015-12-23 08:00,2016-01-07 16:00,,2014-12-13 08:00,2014-12-28 16:00,2014-12-13 08:00,2014-12-28 16:00,2014-12-13 08:00,2014-12-28 16:00,2015-12-23 08:00,2016-01-07 16:00,,PT_Normal,,,,,+g4OVblsEkC+IDToS9tRxA,UcsB3zacaEKVJJaaa1SWFw,,,N,0,0,,,2014-04-05 12:27,2014-04-05 13:21,admin,admin,
1582,141325,1749,35831,1449,0,N,N,N,CP_Drtn,TT_Task,DT_FixedDUR2,TK_NotStart,OFF-ENG-MEP-AC1230,"Wet Area Extract Riser Diagram Block  ( 1,2,3 ) Approval",,2560,1232,112,0,0,0,112,14,0,14,,,,2016-01-06 08:00,2016-01-21 16:00,,2014-12-29 08:00,2015-01-13 16:00,2014-12-29 08:00,2015-01-13 16:00,2014-12-29 08:00,2015-01-13 16:00,2016-01-06 08:00,2016-01-21 16:00,,PT_Normal,,,,,vq7JloG5YECiKY1AyqsrAg,MJ2ZPOD4fkii83CIyzVIgQ,,,N,0,0,,,2014-04-05 12:27,2014-04-05 13:21,admin,admin,
1583,141326,1749,35831,1449,0,N,N,N,CP_Drtn,TT_Task,DT_FixedDUR2,TK_NotStart,OFF-ENG-MEP-AC1240,"Fresh Air and Extract Air for Basement Ventilation Block  ( 1,2,3 ) Approval",,2480,1120,112,0,0,0,112,14,0,14,,,,2016-01-11 08:00,2016-01-26 16:00,,2015-01-14 08:00,2015-01-29 16:00,2015-01-14 08:00,2015-01-29 16:00,2015-01-14 08:00,2015-01-29 16:00,2016-01-11 08:00,2016-01-26 16:00,,PT_Normal,,,,,6pT9kNOG8UuV1HODUICk1Q,qQsWr0xUtUOglj5XvBk8Ow,,,N,0,0,,,2014-04-05 12:27,2014-04-05 13:21,admin,admin,
1584,141327,1749,35831,1449,0,N,N,N,CP_Drtn,TT_Task,DT_FixedDUR2,TK_NotStart,OFF-ENG-MEP-AC1250,"HVAC Typical Installation Details Layout Block  ( 1,2,3 ) Approval",,2272,1008,112,0,0,0,112,14,0,14,,,,2015-12-28 08:00,2016-01-12 16:00,,2015-01-31 08:00,2015-02-15 16:00,2015-01-31 08:00,2015-02-15 16:00,2015-01-31 08:00,2015-02-15 16:00,2015-12-28 08:00,2016-01-12 16:00,,PT_Normal,,,,,2i0A9s3u1ECkq8EdXMsdvA,TRdcY2B9X06cotGHafmv7g,,,N,0,0,,,2014-04-05 12:27,2014-04-05 13:21,admin,admin,
1585,141328,1749,35831,1449,0,N,N,N,CP_Drtn,TT_Task,DT_FixedDUR2,TK_NotStart,OFF-ENG-MEP-AC1170,Level 7  Block [1]  HVAC Layout Approval,,2608,1984,112,0,0,0,112,14,0,14,,,,2015-10-07 08:00,2015-10-22 16:00,,2014-09-22 08:00,2014-10-07 16:00,2014-09-22 08:00,2014-10-07 16:00,2014-09-22 08:00,2014-10-07 16:00,2015-10-07 08:00,2015-10-22 16:00,,PT_Normal,,,,,Kyq3MK/S5Ey1gtIz6oEUJg,Vt/ccYXVT0y+vll+C9l7GA,,,N,0,0,,,2014-04-05 12:27,2014-04-05 13:21,admin,admin,
1586,141329,1749,35831,1449,0,N,N,N,CP_Drtn,TT_Task,DT_FixedDUR2,TK_NotStart,OFF-ENG-MEP-AC1190,Level 9  Block [2]  HVAC Layout Approval,,2352,2184,112,0,0,0,112,14,0,14,,,,2015-10-03 08:00,2015-10-18 16:00,,2014-10-25 08:00,2014-11-09 16:00,2014-10-25 08:00,2014-11-09 16:00,2014-10-25 08:00,2014-11-09 16:00,2015-10-03 08:00,2015-10-18 16:00,,PT_Normal,,,,,zmLYPfcnikWWnqDEmXwO2w,+oyeDX0IMkGWBViOx7gVag,,,N,0,0,,,2014-04-05 12:27,2014-04-05 13:21,admin,admin,
1587,141330,1749,35831,1449,0,N,N,N,CP_Drtn,TT_Task,DT_FixedDUR2,TK_NotStart,OFF-ENG-MEP-AC1210,Level 11  Block [1]  HVAC Layout Approval,,2488,2488,112,0,0,0,112,14,0,14,,,,2015-11-24 08:00,2015-12-09 16:00,,2014-11-26 08:00,2014-12-11 16:00,2014-11-26 08:00,2014-12-11 16:00,2014-11-26 08:00,2014-12-11 16:00,2015-11-24 08:00,2015-12-09 16:00,,PT_Normal,,,,,yhCUcQ3YQka2e94WxP15Ww,I/vpe/xw/kCGyhKbStpz/A,,,N,0,0,,,2014-04-05 12:27,2014-04-05 13:21,admin,admin,
1588,141331,1749,35891,1449,0,N,N,N,CP_Drtn,TT_Task,DT_FixedDUR2,TK_NotStart,OFF-ENG-MEP-WS1000,"2nd Basement  Water Supply Layout Submittal (Block 1,2,3)",,1656,0,112,0,0,0,112,14,0,14,,,,2014-12-30 08:00,2015-01-14 16:00,,2014-05-03 08:00,2014-05-18 16:00,2014-05-03 08:00,2014-05-18 16:00,2014-05-03 08:00,2014-05-18 16:00,2014-12-30 08:00,2015-01-14 16:00,,PT_Normal,,,,,waY6YBK+NUCv7X0ax5skcw,23lHFWFUSUaRjVAbn3NCJQ,,,N,0,0,,,2014-04-05 12:27,2014-04-05 13:21,admin,admin,
1589,141332,1749,35891,1449,0,N,N,N,CP_Drtn,TT_Task,DT_FixedDUR2,TK_NotStart,OFF-ENG-MEP-WS1010,"1st Basement Water Supply Layout Submittal (Block 1,2,3)",,1656,0,112,0,0,0,112,14,0,14,,,,2015-01-15 08:00,2015-01-31 16:00,,2014-05-19 08:00,2014-06-03 16:00,2014-05-19 08:00,2014-06-03 16:00,2014-05-19 08:00,2014-06-03 16:00,2015-01-15 08:00,2015-01-31 16:00,,PT_Normal,,,,,lS+VCheU7E6GTq2K0tzvzw,DeSYL2KHTU6CSOrJvUTduQ,,,N,0,0,,,2014-04-05 12:27,2014-04-05 13:21,admin,admin,
1590,141333,1749,35891,1449,0,N,N,N,CP_Drtn,TT_Task,DT_FixedDUR2,TK_NotStart,OFF-ENG-MEP-WS1020,"Ground Floor Water Supply Layout Submittal (Block 1,2,3)",,1240,0,112,0,0,0,112,14,0,14,,,,2015-02-01 08:00,2015-02-16 16:00,,2014-08-04 08:00,2014-08-19 16:00,2014-08-04 08:00,2014-08-19 16:00,2014-08-04 08:00,2014-08-19 16:00,2015-02-01 08:00,2015-02-16 16:00,,PT_Normal,,,,,t7e1dY2bSEaBIFbrx8swHw,pJLBQEPQ7kC/FQtoWv9qbQ,,,N,0,0,,,2014-04-05 12:27,2014-04-05 13:21,admin,admin,
1591,141334,1749,35891,1449,0,N,N,N,CP_Drtn,TT_Task,DT_FixedDUR2,TK_NotStart,OFF-ENG-MEP-WS1030,Level 1 to Level 7  Block [1]  Water Supply Layout Submittal,,1240,0,112,0,0,0,112,14,0,14,,,,2015-02-17 08:00,2015-03-04 16:00,,2014-08-20 08:00,2014-09-04 16:00,2014-08-20 08:00,2014-09-04 16:00,2014-08-20 08:00,2014-09-04 16:00,2015-02-17 08:00,2015-03-04 16:00,,PT_Normal,,,,,LL3VFkSoWUWluOv7B/F8iQ,2x1kk4XXoUqxh8MXdMEobg,,,N,0,0,,,2014-04-05 12:27,2014-04-05 13:21,admin,admin,
1592,141335,1749,35891,1449,0,N,N,N,CP_Drtn,TT_Task,DT_FixedDUR2,TK_NotStart,OFF-ENG-MEP-WS1040,Level 1 to Level 9  Block [2]  Water Supply Layout Submittal,,1240,0,112,0,0,0,112,14,0,14,,,,2015-03-05 08:00,2015-03-21 16:00,,2014-09-06 08:00,2014-09-21 16:00,2014-09-06 08:00,2014-09-21 16:00,2014-09-06 08:00,2014-09-21 16:00,2015-03-05 08:00,2015-03-21 16:00,,PT_Normal,,,,,4wTQkKveSUWkLjMQqXL2IQ,EeKLBPtzCE+oaTiPlnFrzQ,,,N,0,0,,,2014-04-05 12:27,2014-04-05 13:21,admin,admin,
1593,141336,1749,35891,1449,0,N,N,N,CP_Drtn,TT_Task,DT_FixedDUR2,TK_NotStart,OFF-ENG-MEP-WS1050,Level 1 to Level 11  Block [3]  Water Supply Layout Submittal,,1240,0,112,0,0,0,112,14,0,14,,,,2015-03-22 08:00,2015-04-06 16:00,,2014-09-22 08:00,2014-10-07 16:00,2014-09-22 08:00,2014-10-07 16:00,2014-09-22 08:00,2014-10-07 16:00,2015-03-22 08:00,2015-04-06 16:00,,PT_Normal,,,,,/CfRuAcBUUirDWd+ht0tPw,5bOMZTwUaE25o8xPYf17yg,,,N,0,0,,,2014-04-05 12:27,2014-04-05 13:21,admin,admin,
1594,141337,1749,35891,1449,0,N,N,N,CP_Drtn,TT_Task,DT_FixedDUR2,TK_NotStart,OFF-ENG-MEP-WS1060,"Water Supply Schematic Layout and Riser Diagram Block  ( 1,2,3 ) Submittal",,2640,0,112,0,0,0,112,14,0,14,,,,2015-10-28 08:00,2015-11-12 16:00,,2014-10-08 08:00,2014-10-23 16:00,2014-10-08 08:00,2014-10-23 16:00,2014-10-08 08:00,2014-10-23 16:00,2015-10-28 08:00,2015-11-12 16:00,,PT_Normal,,,,,fKKtX9HGCUGclMERIA9RZA,LDMdZIvwTEusx1+evA3n6A,,,N,0,0,,,2014-04-05 12:27,2014-04-05 13:21,admin,admin,
1595,141338,1749,35891,1449,0,N,N,N,CP_Drtn,TT_Task,DT_FixedDUR2,TK_NotStart,OFF-ENG-MEP-WS1070,"Water Supply Typical Installation Details Layout Block  ( 1,2,3 ) Submittal",,2640,0,112,0,0,0,112,14,0,14,,,,2015-11-14 08:00,2015-11-29 16:00,,2014-10-25 08:00,2014-11-09 16:00,2014-10-25 08:00,2014-11-09 16:00,2014-10-25 08:00,2014-11-09 16:00,2015-11-14 08:00,2015-11-29 16:00,,PT_Normal,,,,,93YG8doIm0SV/hC9H+tGQg,vavRWsGtXEGDExjCeevsdg,,,N,0,0,,,2014-04-05 12:27,2014-04-05 13:21,admin,admin,
1596,141339,1749,35891,1449,0,N,N,N,CP_Drtn,TT_Task,DT_FixedDUR2,TK_NotStart,OFF-ENG-MEP-WS1080,Pump Room Water Supply Details Layout Submittal,,2640,0,112,0,0,0,112,14,0,14,,,,2015-11-30 08:00,2015-12-15 16:00,,2014-11-10 08:00,2014-11-25 16:00,2014-11-10 08:00,2014-11-25 16:00,2014-11-10 08:00,2014-11-25 16:00,2015-11-30 08:00,2015-12-15 16:00,,PT_Normal,,,,,2Fx79gnaw0uKSyvhs8WcHw,pJTR3ndt20W+P8ryVGjYsA,,,N,0,0,,,2014-04-05 12:27,2014-04-05 13:21,admin,admin,
1597,141340,1749,35785,1449,0,N,N,N,CP_Drtn,TT_Task,DT_FixedDUR2,TK_NotStart,OFF-ENG-MEP-WS1090,"2nd Basement  Water Supply Layout Approval (Block 1,2,3)",,1680,560,112,0,0,0,112,14,0,14,,,,2015-01-19 08:00,2015-02-03 16:00,,2014-05-19 08:00,2014-06-03 16:00,2014-05-19 08:00,2014-06-03 16:00,2014-05-19 08:00,2014-06-03 16:00,2015-01-19 08:00,2015-02-03 16:00,,PT_Normal,,,,,M9nnbB7t1kKSnyiqAifj+g,epee2TWYSUSymcl5F7mYew,,,N,0,0,,,2014-04-05 12:27,2014-04-05 13:21,admin,admin,
1598,141341,1749,35785,1449,0,N,N,N,CP_Drtn,TT_Task,DT_FixedDUR2,TK_NotStart,OFF-ENG-MEP-WS1100,"1st Basement Water Supply Layout Approval (Block 1,2,3)",,1736,816,112,0,0,0,112,14,0,14,,,,2015-02-12 08:00,2015-02-28 16:00,,2014-06-04 08:00,2014-06-19 16:00,2014-06-04 08:00,2014-06-19 16:00,2014-06-04 08:00,2014-06-19 16:00,2015-02-12 08:00,2015-02-28 16:00,,PT_Normal,,,,,MEYAc8032E6thssj1z81Dw,R2XO02QJAUCIgQC12eSh2Q,,,N,0,0,,,2014-04-05 12:27,2014-04-05 13:21,admin,admin,
1599,141342,1749,35785,1449,0,N,N,N,CP_Drtn,TT_Task,DT_FixedDUR2,TK_NotStart,OFF-ENG-MEP-WS1110,"Ground Floor Water Supply Layout Approval (Block 1,2,3)",,1368,640,112,0,0,0,112,14,0,14,,,,2015-03-08 08:00,2015-03-23 16:00,,2014-08-20 08:00,2014-09-04 16:00,2014-08-20 08:00,2014-09-04 16:00,2014-08-20 08:00,2014-09-04 16:00,2015-03-08 08:00,2015-03-23 16:00,,PT_Normal,,,,,ea4TsY5eUkajSytvkDWqUw,lOuviixvkkiMNGVxnCktbg,,,N,0,0,,,2014-04-05 12:27,2014-04-05 13:21,admin,admin,
1600,141343,1749,35785,1449,0,N,N,N,CP_Drtn,TT_Task,DT_FixedDUR2,TK_NotStart,OFF-ENG-MEP-WS1120,Level 1 to Level 7  Block [1]  Water Supply Layout Approval,,1808,736,112,0,0,0,112,14,0,14,,,,2015-05-27 08:00,2015-06-11 16:00,,2014-09-06 08:00,2014-09-21 16:00,2014-09-06 08:00,2014-09-21 16:00,2014-09-06 08:00,2014-09-21 16:00,2015-05-27 08:00,2015-06-11 16:00,,PT_Normal,,,,,UjsSrjF0MkCHgTHzlw3/bg,dpPN9+dyrUe1EtYBNv/d6w,,,N,0,0,,,2014-04-05 12:27,2014-04-05 13:21,admin,admin,
1601,141344,1749,35785,1449,0,N,N,N,CP_Drtn,TT_Task,DT_FixedDUR2,TK_NotStart,OFF-ENG-MEP-WS1130,Level 1 to Level 9  Block [2]  Water Supply Layout Approval,,1312,880,112,0,0,0,112,14,0,14,,,,2015-04-01 08:00,2015-04-16 16:00,,2014-09-22 08:00,2014-10-07 16:00,2014-09-22 08:00,2014-10-07 16:00,2014-09-22 08:00,2014-10-07 16:00,2015-04-01 08:00,2015-04-16 16:00,,PT_Normal,,,,,pxtMAgmXkkmnXsWyj+hSUQ,+/KwcHyqAEuGqudr9T2zDA,,,N,0,0,,,2014-04-05 12:27,2014-04-05 13:21,admin,admin,
1602,141345,1749,35785,1449,0,N,N,N,CP_Drtn,TT_Task,DT_FixedDUR2,TK_NotStart,OFF-ENG-MEP-WS1140,Level 1 to Level 11  Block [3]  Water Supply Layout Approval,,1240,1048,112,0,0,0,112,14,0,14,,,,2015-04-07 08:00,2015-04-22 16:00,,2014-10-08 08:00,2014-10-23 16:00,2014-10-08 08:00,2014-10-23 16:00,2014-10-08 08:00,2014-10-23 16:00,2015-04-07 08:00,2015-04-22 16:00,,PT_Normal,,,,,wGImeVedO0GrzVbQ24TLqA,2Yxtd3TIpk68qRU0Q/yTHg,,,N,0,0,,,2014-04-05 12:27,2014-04-05 13:21,admin,admin,
1603,141346,1749,35785,1449,0,N,N,N,CP_Drtn,TT_Task,DT_FixedDUR2,TK_NotStart,OFF-ENG-MEP-WS1150,"Water Supply Schematic Layout and Riser Diagram Block  ( 1,2,3 ) Approval",,2816,1680,112,0,0,0,112,14,0,14,,,,2015-12-09 08:00,2015-12-24 16:00,,2014-10-25 08:00,2014-11-09 16:00,2014-10-25 08:00,2014-11-09 16:00,2014-10-25 08:00,2014-11-09 16:00,2015-12-09 08:00,2015-12-24 16:00,,PT_Normal,,,,,7yOhs10uvkmitFk52S4kVQ,Ldc8PGAGuku4BrIy0JY1NA,,,N,0,0,,,2014-04-05 12:27,2014-04-05 13:21,admin,admin,
1604,141347,1749,35785,1449,0,N,N,N,CP_Drtn,TT_Task,DT_FixedDUR2,TK_NotStart,OFF-ENG-MEP-WS1160,"Water Supply Typical Installation Details Layout Block  ( 1,2,3 ) Approval",,2752,752,112,0,0,0,112,14,0,14,,,,2015-12-16 08:00,2015-12-31 16:00,,2014-11-10 08:00,2014-11-25 16:00,2014-11-10 08:00,2014-11-25 16:00,2014-11-10 08:00,2014-11-25 16:00,2015-12-16 08:00,2015-12-31 16:00,,PT_Normal,,,,,+McHYPD1yU+YS35TUHwnpg,RD+I/HJ8ck+SqLabnpfa4w,,,N,0,0,,,2014-04-05 12:27,2014-04-05 13:21,admin,admin,
1605,141348,1749,35785,1449,0,N,N,N,CP_Drtn,TT_Task,DT_FixedDUR2,TK_NotStart,OFF-ENG-MEP-WS1170,Pump Room Water Supply Details Layout Approval,,2640,640,112,0,0,0,112,14,0,14,,,,2015-12-16 08:00,2015-12-31 16:00,,2014-11-26 08:00,2014-12-11 16:00,2014-11-26 08:00,2014-12-11 16:00,2014-11-26 08:00,2014-12-11 16:00,2015-12-16 08:00,2015-12-31 16:00,,PT_Normal,,,,,x6jbJOHzDU2UPrwc6EfBnw,Yxn5/IEeIEKbeYPc2iIWBg,,,N,0,0,,,2014-04-05 12:27,2014-04-05 13:21,admin,admin,
1606,141349,1749,35705,1449,0,N,N,N,CP_Drtn,TT_Task,DT_FixedDUR2,TK_NotStart,OFF-ENG-MEP-FF1000,"2nd Basement  Fire Fighting Layout Submittal (Block 1,2,3)",,2424,0,112,0,0,0,112,14,0,14,,,,2015-03-01 08:00,2015-03-16 16:00,,2014-03-12 08:00,2014-03-27 16:00,2014-03-12 08:00,2014-03-27 16:00,2014-03-12 08:00,2014-03-27 16:00,2015-03-01 08:00,2015-03-16 16:00,,PT_Normal,,,,,HoctHTndS0OQQ2fMFTVS6Q,Mfjo7Tg/vUu12P+F9BnTrw,,,N,0,0,,,2014-04-05 12:27,2014-04-05 13:21,admin,admin,
1607,141350,1749,35705,1449,0,N,N,N,CP_Drtn,TT_Task,DT_FixedDUR2,TK_NotStart,OFF-ENG-MEP-FF1010,"1st Basement Fire Fighting Layout Submittal (Block 1,2,3)",,2460,0,112,0,0,0,112,14,0,14,,,,2015-03-22 12:00,2015-04-07 12:00,,2014-03-29 08:00,2014-04-13 16:00,2014-03-29 08:00,2014-04-13 16:00,2014-03-29 08:00,2014-04-13 16:00,2015-03-22 12:00,2015-04-07 12:00,,PT_Normal,,,,,QBk0TsASZ0ua5HT2ozlArQ,d8P3hnXTNkytt1UqmD6AEQ,,,N,0,0,,,2014-04-05 12:27,2014-04-05 13:21,admin,admin,
1608,141351,1749,35705,1449,0,N,N,N,CP_Drtn,TT_Task,DT_FixedDUR2,TK_NotStart,OFF-ENG-MEP-FF1020,"Ground Floor Fire Fighting Layout Submittal (Block 1,2,3)",,1692,0,112,0,0,0,112,14,0,14,,,,2015-04-07 12:00,2015-04-23 12:00,,2014-08-04 08:00,2014-08-19 16:00,2014-08-04 08:00,2014-08-19 16:00,2014-08-04 08:00,2014-08-19 16:00,2015-04-07 12:00,2015-04-23 12:00,,PT_Normal,,,,,rxN36Q++RUO2w0xi+Q5QeQ,qyJwAFbhvU6pzBo4NklAFw,,,N,0,0,,,2014-04-05 12:27,2014-04-05 13:21,admin,admin,
1609,141352,1749,35705,1449,0,N,N,N,CP_Drtn,TT_Task,DT_FixedDUR2,TK_NotStart,OFF-ENG-MEP-FF1030,Level 1 to Level 7  Block [1]  Fire Fighting Layout Submittal,,1692,0,112,0,0,0,112,14,0,14,,,,2015-04-23 12:00,2015-05-10 12:00,,2014-08-20 08:00,2014-09-04 16:00,2014-08-20 08:00,2014-09-04 16:00,2014-08-20 08:00,2014-09-04 16:00,2015-04-23 12:00,2015-05-10 12:00,,PT_Normal,,,,,T/yw/xvBV0axcX4/DhJchA,wP9eMyT9eUOpLlrVtfWZKg,,,N,0,0,,,2014-04-05 12:27,2014-04-05 13:21,admin,admin,
1610,141353,1749,35705,1449,0,N,N,N,CP_Drtn,TT_Task,DT_FixedDUR2,TK_NotStart,OFF-ENG-MEP-FF1040,Level 1 to Level 9  Block [2]  Fire Fighting Layout Submittal,,1692,0,112,0,0,0,112,14,0,14,,,,2015-05-10 12:00,2015-05-26 12:00,,2014-09-06 08:00,2014-09-21 16:00,2014-09-06 08:00,2014-09-21 16:00,2014-09-06 08:00,2014-09-21 16:00,2015-05-10 12:00,2015-05-26 12:00,,PT_Normal,,,,,SoXZ84g0Z0uvsievyo68lg,qegBbl8wl0Si7YsmMhhcRg,,,N,0,0,,,2014-04-05 12:27,2014-04-05 13:21,admin,admin,
1611,141354,1749,35705,1449,0,N,N,N,CP_Drtn,TT_Task,DT_FixedDUR2,TK_NotStart,OFF-ENG-MEP-FF1050,Level 1 to Level 11  Block [3]  Fire Fighting Layout Submittal,,1692,0,112,0,0,0,112,14,0,14,,,,2015-05-26 12:00,2015-06-11 12:00,,2014-09-22 08:00,2014-10-07 16:00,2014-09-22 08:00,2014-10-07 16:00,2014-09-22 08:00,2014-10-07 16:00,2015-05-26 12:00,2015-06-11 12:00,,PT_Normal,,,,,nToLuTJ3vUa7ttkrf0JRAA,CSyqUFUPGEuUrSIltIQOmA,,,N,0,0,,,2014-04-05 12:27,2014-04-05 13:21,admin,admin,
1612,141355,1749,35705,1449,0,N,N,N,CP_Drtn,TT_Task,DT_FixedDUR2,TK_NotStart,OFF-ENG-MEP-FF1060,"Fire Fighting Schematic Layout and Riser Diagram Block  ( 1,2,3 ) Submittal",,1692,0,112,0,0,0,112,14,0,14,,,,2015-06-11 12:00,2015-06-28 12:00,,2014-10-08 08:00,2014-10-23 16:00,2014-10-08 08:00,2014-10-23 16:00,2014-10-08 08:00,2014-10-23 16:00,2015-06-11 12:00,2015-06-28 12:00,,PT_Normal,,,,,1551zkfDEk+mYXjFi9KrtA,1X/dHSt2ekmZYY/lpmLF8w,,,N,0,0,,,2014-04-05 12:27,2014-04-05 13:21,admin,admin,
1613,141356,1749,35705,1449,0,N,N,N,CP_Drtn,TT_Task,DT_FixedDUR2,TK_NotStart,OFF-ENG-MEP-FF1070,"Fire Fighting Typical Installation Details Layout Block  ( 1,2,3 ) Submittal",,1692,0,112,0,0,0,112,14,0,14,,,,2015-06-28 12:00,2015-07-14 12:00,,2014-10-25 08:00,2014-11-09 16:00,2014-10-25 08:00,2014-11-09 16:00,2014-10-25 08:00,2014-11-09 16:00,2015-06-28 12:00,2015-07-14 12:00,,PT_Normal,,,,,ep8tNaGba0aMgyviEjAUDA,JtmvnCanhkO/Fw4EYviINw,,,N,0,0,,,2014-04-05 12:27,2014-04-05 13:21,admin,admin,
1614,141357,1749,35705,1449,0,N,N,N,CP_Drtn,TT_Task,DT_FixedDUR2,TK_NotStart,OFF-ENG-MEP-FF1080,Pump Room Fire Fighting Details Layout Submittal,,2568,0,112,0,0,0,112,14,0,14,,,,2015-11-19 08:00,2015-12-05 16:00,,2014-11-10 08:00,2014-11-25 16:00,2014-11-10 08:00,2014-11-25 16:00,2014-11-10 08:00,2014-11-25 16:00,2015-11-19 08:00,2015-12-05 16:00,,PT_Normal,,,,,J673RqqJdESNDoslylX+BA,8POCYa8sGk+MgvI2G7Ryxg,,,N,0,0,,,2014-04-05 12:27,2014-04-05 13:21,admin,admin,
1615,141358,1749,35706,1449,0,N,N,N,CP_Drtn,TT_Task,DT_FixedDUR2,TK_NotStart,OFF-ENG-MEP-FF1090,"2nd Basement  Fire Fighting Layout Approval (Block 1,2,3)",,2424,912,112,0,0,0,112,14,0,14,,,,2015-03-17 08:00,2015-04-01 16:00,,2014-03-29 08:00,2014-04-13 16:00,2014-03-29 08:00,2014-04-13 16:00,2014-03-29 08:00,2014-04-13 16:00,2015-03-17 08:00,2015-04-01 16:00,,PT_Normal,,,,,KJX95YQw3U2X6tjuDRxUkg,myyxQ2GJsEiWuRyxr/UhUg,,,N,0,0,,,2014-04-05 12:27,2014-04-05 13:21,admin,admin,
1616,141359,1749,35706,1449,0,N,N,N,CP_Drtn,TT_Task,DT_FixedDUR2,TK_NotStart,OFF-ENG-MEP-FF1100,"1st Basement Fire Fighting Layout Approval (Block 1,2,3)",,2504,1168,112,0,0,0,112,14,0,14,,,,2015-04-14 08:00,2015-04-29 16:00,,2014-04-14 08:00,2014-04-29 16:00,2014-04-14 08:00,2014-04-29 16:00,2014-04-14 08:00,2014-04-29 16:00,2015-04-14 08:00,2015-04-29 16:00,,PT_Normal,,,,,ttzf2g3Ev0qgx5NuGBydsA,gEftkIBByU6xzF+BHPrpKg,,,N,0,0,,,2014-04-05 12:27,2014-04-05 13:21,admin,admin,
1617,141360,1749,35706,1449,0,N,N,N,CP_Drtn,TT_Task,DT_FixedDUR2,TK_NotStart,OFF-ENG-MEP-FF1110,"Ground Floor Fire Fighting Layout Approval (Block 1,2,3)",,2476,2064,112,0,0,0,112,14,0,14,,,,2015-08-16 12:00,2015-09-01 12:00,,2014-08-20 08:00,2014-09-04 16:00,2014-08-20 08:00,2014-09-04 16:00,2014-08-20 08:00,2014-09-04 16:00,2015-08-16 12:00,2015-09-01 12:00,,PT_Normal,,,,,yM3hS7KmgEWVx+lr6WEC2g,+S/ygOl850KvGR+M621jmQ,,,N,0,0,,,2014-04-05 12:27,2014-04-05 13:21,admin,admin,
1618,141361,1749,35706,1449,0,N,N,N,CP_Drtn,TT_Task,DT_FixedDUR2,TK_NotStart,OFF-ENG-MEP-FF1120,Level 1 to Level 7  Block [1]  Fire Fighting Layout Approval,,3272,1968,112,0,0,0,112,14,0,14,,,,2015-12-27 08:00,2016-01-11 16:00,,2014-09-06 08:00,2014-09-21 16:00,2014-09-06 08:00,2014-09-21 16:00,2014-09-06 08:00,2014-09-21 16:00,2015-12-27 08:00,2016-01-11 16:00,,PT_Normal,,,,,+tP+P+vEwkqZI/+qxslFPw,nWYCjALkeU2TWa39D52l/Q,,,N,0,0,,,2014-04-05 12:27,2014-04-05 13:21,admin,admin,
1619,141362,1749,35706,1449,0,N,N,N,CP_Drtn,TT_Task,DT_FixedDUR2,TK_NotStart,OFF-ENG-MEP-FF1130,Level 1 to Level 9  Block [2]  Fire Fighting Layout Approval,,3048,2368,112,0,0,0,112,14,0,14,,,,2015-12-10 08:00,2015-12-26 16:00,,2014-09-22 08:00,2014-10-07 16:00,2014-09-22 08:00,2014-10-07 16:00,2014-09-22 08:00,2014-10-07 16:00,2015-12-10 08:00,2015-12-26 16:00,,PT_Normal,,,,,B/R4uLlqTEqPPbFHTuQnzA,6pQgwnxASUaXUhRCvx4CJA,,,N,0,0,,,2014-04-05 12:27,2014-04-05 13:21,admin,admin,
1620,141363,1749,35706,1449,0,N,N,N,CP_Drtn,TT_Task,DT_FixedDUR2,TK_NotStart,OFF-ENG-MEP-FF1140,Level 1 to Level 11  Block [3]  Fire Fighting Layout Approval,,2880,2840,112,0,0,0,112,14,0,14,,,,2015-12-02 08:00,2015-12-17 16:00,,2014-10-08 08:00,2014-10-23 16:00,2014-10-08 08:00,2014-10-23 16:00,2014-10-08 08:00,2014-10-23 16:00,2015-12-02 08:00,2015-12-17 16:00,,PT_Normal,,,,,HXM11BaW2k2jitPakfyoqw,5fn0deUsQ0uDIb5d+j9iWw,,,N,0,0,,,2014-04-05 12:27,2014-04-05 13:21,admin,admin,
1621,141364,1749,35706,1449,0,N,N,N,CP_Drtn,TT_Task,DT_FixedDUR2,TK_NotStart,OFF-ENG-MEP-FF1150,"Fire Fighting Schematic Layout and Riser Diagram Block  ( 1,2,3 ) Approval",,1804,1384,112,0,0,0,112,14,0,14,,,,2015-07-14 12:00,2015-07-30 12:00,,2014-10-25 08:00,2014-11-09 16:00,2014-10-25 08:00,2014-11-09 16:00,2014-10-25 08:00,2014-11-09 16:00,2015-07-14 12:00,2015-07-30 12:00,,PT_Normal,,,,,ZJqos4WobECf8FNepzop2g,6YPd2ZS1G0u1lAJeT3jXcA,,,N,0,0,,,2014-04-05 12:27,2014-04-05 13:21,admin,admin,
1622,141365,1749,35706,1449,0,N,N,N,CP_Drtn,TT_Task,DT_FixedDUR2,TK_NotStart,OFF-ENG-MEP-FF1160,"Fire Fighting Typical Installation Details Layout Block  ( 1,2,3 ) Approval",,1692,1272,112,0,0,0,112,14,0,14,,,,2015-07-14 12:00,2015-07-30 12:00,,2014-11-10 08:00,2014-11-25 16:00,2014-11-10 08:00,2014-11-25 16:00,2014-11-10 08:00,2014-11-25 16:00,2015-07-14 12:00,2015-07-30 12:00,,PT_Normal,,,,,jYHK06BQ0kaVXWMpaZ1exg,hlw9dZA+OEilJZgAQTQXkw,,,N,0,0,,,2014-04-05 12:27,2014-04-05 13:21,admin,admin,
1623,141366,1749,35706,1449,0,N,N,N,CP_Drtn,TT_Task,DT_FixedDUR2,TK_NotStart,OFF-ENG-MEP-FF1170,Pump Room Fire Fighting Details Layout Approval,,2568,216,112,0,0,0,112,14,0,14,,,,2015-12-06 08:00,2015-12-21 16:00,,2014-11-26 08:00,2014-12-11 16:00,2014-11-26 08:00,2014-12-11 16:00,2014-11-26 08:00,2014-12-11 16:00,2015-12-06 08:00,2015-12-21 16:00,,PT_Normal,,,,,Gr5A+cn7TEKaJ1zAplw2Ag,Chhr8WBQWUGSeXk8ckWteQ,,,N,0,0,,,2014-04-05 12:27,2014-04-05 13:21,admin,admin,
1624,141367,1749,35836,1449,0,N,N,N,CP_Drtn,TT_Task,DT_FixedDUR2,TK_NotStart,ENGMEP8530,"1st Basement Floor Slabs and 2nd Basement Core Wall  Builders Work Layout Submittal (Block 1,2,3)",,498,0,112,0,0,0,112,14,0,14,,,,2014-06-26 10:00,2014-07-13 10:00,,2014-04-15 08:00,2014-04-30 16:00,2014-04-15 08:00,2014-04-30 16:00,2014-04-15 08:00,2014-04-30 16:00,2014-06-26 10:00,2014-07-13 10:00,,PT_Normal,,,,,Y5Apfl1nRkqbOBVeE+DDxg,B5zxZZQDq0qf2jxi6haoXw,,,N,0,0,,,2014-04-05 12:27,2014-04-05 13:21,admin,admin,
1625,141368,1749,35836,1449,0,N,N,N,CP_Drtn,TT_Task,DT_FixedDUR2,TK_NotStart,ENGMEP8540,"Ground Floor Slabs and 1st Basement Core Wall  Builders Work Layout Submittal (Block 1,2,3)",,728,0,112,0,0,0,112,14,0,14,,,,2014-08-16 08:00,2014-08-31 16:00,,2014-05-01 08:00,2014-05-17 16:00,2014-05-01 08:00,2014-05-17 16:00,2014-05-01 08:00,2014-05-17 16:00,2014-08-16 08:00,2014-08-31 16:00,,PT_Normal,,,,,B9eCwv9Jsk2F+rPz5vlTaw,H59EEwkqYEuWM9sJU2eafg,,,N,0,0,,,2014-04-05 12:27,2014-04-05 13:21,admin,admin,
1626,141369,1749,35836,1449,0,N,N,N,CP_Drtn,TT_Task,DT_FixedDUR2,TK_NotStart,ENGMEP8550,Level 1 to Level 7  Block [1]  Builders Work Layout Submittal,,880,0,112,0,0,0,112,14,0,14,,,,2014-09-23 08:00,2014-10-08 16:00,,2014-05-18 08:00,2014-06-02 16:00,2014-05-18 08:00,2014-06-02 16:00,2014-05-18 08:00,2014-06-02 16:00,2014-09-23 08:00,2014-10-08 16:00,,PT_Normal,,,,,ihnk+MLXHkilQJNf/BnL7w,pqP1RUuiF0Oef0OzNxDm7Q,,,N,0,0,,,2014-04-05 12:27,2014-04-05 13:21,admin,admin,
1627,141370,1749,35836,1449,0,N,N,N,CP_Drtn,TT_Task,DT_FixedDUR2,TK_NotStart,ENGMEP8560,Level 1 to Level 9  Block [2]  Builders Work Layout Submittal,,880,0,112,0,0,0,112,14,0,14,,,,2014-10-09 08:00,2014-10-25 16:00,,2014-06-03 08:00,2014-06-18 16:00,2014-06-03 08:00,2014-06-18 16:00,2014-06-03 08:00,2014-06-18 16:00,2014-10-09 08:00,2014-10-25 16:00,,PT_Normal,,,,,67e1wlo5s0u7pqQk85LrKg,dDrGzrz6KUe6zAoy5whUQQ,,,N,0,0,,,2014-04-05 12:27,2014-04-05 13:21,admin,admin,
1628,141371,1749,35836,1449,0,N,N,N,CP_Drtn,TT_Task,DT_FixedDUR2,TK_NotStart,ENGMEP8570,Level 1 to Level 11  Block [3]  Builders Work Layout Submittal,,928,0,112,0,0,0,112,14,0,14,,,,2014-11-02 08:00,2014-11-17 16:00,,2014-06-19 08:00,2014-07-05 16:00,2014-06-19 08:00,2014-07-05 16:00,2014-06-19 08:00,2014-07-05 16:00,2014-11-02 08:00,2014-11-17 16:00,,PT_Normal,,,,,8wE0afza7Eaoa43j7EhZfQ,xXu1bLWcxkyTs2U60dlH3A,,,N,0,0,,,2014-04-05 12:27,2014-04-05 13:21,admin,admin,
1629,141372,1749,35836,1449,0,N,N,N,CP_Drtn,TT_Task,DT_FixedDUR2,TK_NotStart,ENGMEP8610,"Raft Builders Work Layout Block (1,2,3) Submittal",,112,0,112,0,0,0,112,14,0,14,,,,2014-02-22 08:00,2014-03-09 16:00,,2014-02-05 08:00,2014-02-20 16:00,2014-02-05 08:00,2014-02-20 16:00,2014-02-05 08:00,2014-02-20 16:00,2014-02-22 08:00,2014-03-09 16:00,,PT_Normal,,,,,j7AdSTlYBUG7n4SSHei6gg,veIlepMgNkezWfxODl5Z1A,,,N,0,0,,,2014-04-05 12:27,2014-04-05 13:21,admin,admin,
1630,141373,1749,35878,1447,0,N,N,N,CP_Drtn,TT_Task,DT_FixedDUR2,TK_NotStart,ENGMEP8620,"1st Basement Floor Slabs and 2nd Basement Core Wall  Builders Work Layout Approval (Block 1,2,3)",,586,0,112,0,0,0,112,14,0,14,,,,2014-07-13 10:00,2014-07-27 10:00,,2014-05-01 08:00,2014-05-14 16:00,2014-05-01 08:00,2014-05-14 16:00,2014-05-01 08:00,2014-05-14 16:00,2014-07-13 10:00,2014-07-27 10:00,,PT_Normal,,,,,f/gX9ewrXEWqJdOZyA4PwA,sDW82r6XtUuAK0fBIxxAnA,,,N,0,0,,,2014-04-05 12:27,2014-04-05 13:21,admin,admin,
1631,141374,1749,35878,1449,0,N,N,N,CP_Drtn,TT_Task,DT_FixedDUR2,TK_NotStart,ENGMEP8630,"Ground Floor Slabs and 1st Basement Core Wall  Builders Work Layout Approval (Block 1,2,3)",,728,152,112,0,0,0,112,14,0,14,,,,2014-09-01 08:00,2014-09-16 16:00,,2014-05-18 08:00,2014-06-02 16:00,2014-05-18 08:00,2014-06-02 16:00,2014-05-18 08:00,2014-06-02 16:00,2014-09-01 08:00,2014-09-16 16:00,,PT_Normal,,,,,3zEqIAreOUyU4+HIJv8etQ,VAe/mXBwjUmnRwsrHL4hww,,,N,0,0,,,2014-04-05 12:27,2014-04-05 13:21,admin,admin,
1632,141375,1749,35878,1449,0,N,N,N,CP_Drtn,TT_Task,DT_FixedDUR2,TK_NotStart,ENGMEP8640,Level 1 to Level 7  Block [1]  Builders Work Layout Approval,,1020,456,112,0,0,0,112,14,0,14,,,,2014-10-29 12:00,2014-11-15 12:00,,2014-06-03 08:00,2014-06-18 16:00,2014-06-03 08:00,2014-06-18 16:00,2014-06-03 08:00,2014-06-18 16:00,2014-10-29 12:00,2014-11-15 12:00,,PT_Normal,,,,,zM9adz2AmUWwNuznTD4AFQ,3STyrOjaEUSKPNLIOKRE1A,,,N,0,0,,,2014-04-05 12:27,2014-04-05 13:21,admin,admin,
1633,141376,1749,35878,1449,0,N,N,N,CP_Drtn,TT_Task,DT_FixedDUR2,TK_NotStart,ENGMEP8650,Level 1 to Level 9  Block [2]  Builders Work Layout Approval,,880,568,112,0,0,0,112,14,0,14,,,,2014-10-26 08:00,2014-11-10 16:00,,2014-06-19 08:00,2014-07-05 16:00,2014-06-19 08:00,2014-07-05 16:00,2014-06-19 08:00,2014-07-05 16:00,2014-10-26 08:00,2014-11-10 16:00,,PT_Normal,,,,,Unl9QugdZE23tlLugKTK0A,48JhvytDTEWc+SEIeGNB8g,,,N,0,0,,,2014-04-05 12:27,2014-04-05 13:21,admin,admin,
1634,141377,1749,35878,1449,0,N,N,N,CP_Drtn,TT_Task,DT_FixedDUR2,TK_NotStart,ENGMEP8660,Level 1 to Level 11  Block [3]  Builders Work Layout Approval,,928,864,112,0,0,0,112,14,0,14,,,,2014-11-18 08:00,2014-12-03 16:00,,2014-07-06 08:00,2014-07-21 16:00,2014-07-06 08:00,2014-07-21 16:00,2014-07-06 08:00,2014-07-21 16:00,2014-11-18 08:00,2014-12-03 16:00,,PT_Normal,,,,,0TEwFPt2DUyysroZLoNkSA,mqkebsUwO0yCbmFP6LXHXQ,,,N,0,0,,,2014-04-05 12:27,2014-04-05 13:21,admin,admin,
1635,141378,1749,35878,1449,0,N,N,N,CP_Drtn,TT_Task,DT_FixedDUR2,TK_NotStart,ENGMEP8700,"Raft Builders Work Layout Block (1,2,3) Approval",,112,112,112,0,0,0,112,14,0,14,,,,2014-03-10 08:00,2014-03-25 16:00,,2014-02-22 08:00,2014-03-09 16:00,2014-02-22 08:00,2014-03-09 16:00,2014-02-22 08:00,2014-03-09 16:00,2014-03-10 08:00,2014-03-25 16:00,,PT_Normal,,,,,AVtlU7PlxUKe9mZwupMEbQ,bVscN/WEckmci7u2NUicPA,,,N,0,0,,,2014-04-05 12:27,2014-04-05 13:21,admin,admin,
1636,141379,1749,35753,1449,0,N,N,N,CP_Drtn,TT_Task,DT_FixedDUR2,TK_NotStart,ENGMEP8710,"2nd Basement  Power Layout Submittal (Block 1,2,3)",,1328,0,112,0,0,0,112,14,0,14,,,,2014-10-27 08:00,2014-11-11 16:00,,2014-04-16 08:00,2014-05-01 16:00,2014-04-16 08:00,2014-05-01 16:00,2014-04-16 08:00,2014-05-01 16:00,2014-10-27 08:00,2014-11-11 16:00,,PT_Normal,,,,,hZvPaQaD2kO/5Gd6IMZLTw,Ul32kklH1kumiHQAfuzK1Q,,,N,0,0,,,2014-04-05 12:27,2014-04-05 13:21,admin,admin,
1637,141380,1749,35753,1449,0,N,N,N,CP_Drtn,TT_Task,DT_FixedDUR2,TK_NotStart,ENGMEP8720,"1st Basement Power Layout Submittal (Block 1,2,3)",,1552,0,112,0,0,0,112,14,0,14,,,,2014-12-15 08:00,2014-12-30 16:00,,2014-05-03 08:00,2014-05-18 16:00,2014-05-03 08:00,2014-05-18 16:00,2014-05-03 08:00,2014-05-18 16:00,2014-12-15 08:00,2014-12-30 16:00,,PT_Normal,,,,,MXAHsh2ewkmBWUynN3JUhw,sIAE39neEUeYn3gGRYXRSQ,,,N,0,0,,,2014-04-05 12:27,2014-04-05 13:21,admin,admin,
1638,141381,1749,35753,1449,0,N,N,N,CP_Drtn,TT_Task,DT_FixedDUR2,TK_NotStart,ENGMEP8730,"Ground Floor Power Layout Submittal (Block 1,2,3)",,1552,0,112,0,0,0,112,14,0,14,,,,2014-12-31 08:00,2015-01-15 16:00,,2014-05-19 08:00,2014-06-03 16:00,2014-05-19 08:00,2014-06-03 16:00,2014-05-19 08:00,2014-06-03 16:00,2014-12-31 08:00,2015-01-15 16:00,,PT_Normal,,,,,cqfxNMPSKUa5o0F86Z7k8A,MLBnvHV+IE6Vqy4MlrQKKw,,,N,0,0,,,2014-04-05 12:27,2014-04-05 13:21,admin,admin,
1639,141382,1749,35753,1449,0,N,N,N,CP_Drtn,TT_Task,DT_FixedDUR2,TK_NotStart,ENGMEP8740,Level 1 to Level 7  Block [1]  Power Layout Submittal,,1552,0,112,0,0,0,112,14,0,14,,,,2015-01-17 08:00,2015-02-01 16:00,,2014-06-04 08:00,2014-06-19 16:00,2014-06-04 08:00,2014-06-19 16:00,2014-06-04 08:00,2014-06-19 16:00,2015-01-17 08:00,2015-02-01 16:00,,PT_Normal,,,,,aS4yDVRFgkmydvdlmqCQ+g,zQiCkuYJTEWzmKP13qEDhw,,,N,0,0,,,2014-04-05 12:27,2014-04-05 13:21,admin,admin,
1640,141383,1749,35753,1449,0,N,N,N,CP_Drtn,TT_Task,DT_FixedDUR2,TK_NotStart,ENGMEP8750,Level 1 to Level 9  Block [2]  Power Layout Submittal,,1552,0,112,0,0,0,112,14,0,14,,,,2015-02-02 08:00,2015-02-17 16:00,,2014-06-21 08:00,2014-07-06 16:00,2014-06-21 08:00,2014-07-06 16:00,2014-06-21 08:00,2014-07-06 16:00,2015-02-02 08:00,2015-02-17 16:00,,PT_Normal,,,,,CS1xGiZAmUO/fcHPXxAeJA,TWwCpEZ7d0eSLgByhSVZIQ,,,N,0,0,,,2014-04-05 12:27,2014-04-05 13:21,admin,admin,
1641,141384,1749,35753,1449,0,N,N,N,CP_Drtn,TT_Task,DT_FixedDUR2,TK_NotStart,ENGMEP8760,Level 1 to Level 11  Block [3]  Power Layout Submittal,,1552,0,112,0,0,0,112,14,0,14,,,,2015-02-18 08:00,2015-03-05 16:00,,2014-07-07 08:00,2014-07-22 16:00,2014-07-07 08:00,2014-07-22 16:00,2014-07-07 08:00,2014-07-22 16:00,2015-02-18 08:00,2015-03-05 16:00,,PT_Normal,,,,,X0PondO/w0uNXkervJGElg,Z/k+hX9MFUyNM+BtYGBbPw,,,N,0,0,,,2014-04-05 12:27,2014-04-05 13:21,admin,admin,
1642,141385,1749,35753,1449,0,N,N,N,CP_Drtn,TT_Task,DT_FixedDUR2,TK_NotStart,ENGMEP8770,"Roof Floor  Block  ( 1,2,3 ) Lighting Protection Layout Submittal",,2288,0,112,0,0,0,112,14,0,14,,,,2015-06-22 08:00,2015-07-07 16:00,,2014-07-23 08:00,2014-08-07 16:00,2014-07-23 08:00,2014-08-07 16:00,2014-07-23 08:00,2014-08-07 16:00,2015-06-22 08:00,2015-07-07 16:00,,PT_Normal,,,,,gw55a48nbUem3WlvgwW8UQ,Msk9evJEk02TVdKGLUxfZA,,,N,0,0,,,2014-04-05 12:27,2014-04-05 13:21,admin,admin,
1643,141386,1749,35753,1449,0,N,N,N,CP_Drtn,TT_Task,DT_FixedDUR2,TK_NotStart,ENGMEP8780,"Power Riser Diagram Block  ( 1,2,3 ) Layout Submittal",,2288,0,112,0,0,0,112,14,0,14,,,,2015-07-08 08:00,2015-07-23 16:00,,2014-08-09 08:00,2014-08-24 16:00,2014-08-09 08:00,2014-08-24 16:00,2014-08-09 08:00,2014-08-24 16:00,2015-07-08 08:00,2015-07-23 16:00,,PT_Normal,,,,,UhSYgRF97kut5IbACG+tJg,YiPV+VluD0qZ+RZdT7WeQA,,,N,0,0,,,2014-04-05 12:27,2014-04-05 13:21,admin,admin,
1644,141387,1749,35753,1449,0,N,N,N,CP_Drtn,TT_Task,DT_FixedDUR2,TK_NotStart,ENGMEP8790,"LV Room  Details  Block  ( 1,2,3 ) Layout Submittal",,2288,0,112,0,0,0,112,14,0,14,,,,2015-07-25 08:00,2015-08-09 16:00,,2014-08-25 08:00,2014-09-09 16:00,2014-08-25 08:00,2014-09-09 16:00,2014-08-25 08:00,2014-09-09 16:00,2015-07-25 08:00,2015-08-09 16:00,,PT_Normal,,,,,Q/jLzqgh30CVfHneTthhTQ,6lzEhanWKUi42JWg86uZMQ,,,N,0,0,,,2014-04-05 12:27,2014-04-05 13:21,admin,admin,
1645,141388,1749,35753,1449,0,N,N,N,CP_Drtn,TT_Task,DT_FixedDUR2,TK_NotStart,ENGMEP8800,"Substation Room Details  Block  ( 1,2,3 ) Layout Submittal",,2288,0,112,0,0,0,112,14,0,14,,,,2015-08-10 08:00,2015-08-25 16:00,,2014-09-10 08:00,2014-09-25 16:00,2014-09-10 08:00,2014-09-25 16:00,2014-09-10 08:00,2014-09-25 16:00,2015-08-10 08:00,2015-08-25 16:00,,PT_Normal,,,,,7XbgsYWC8kW+EIbS6nQH9Q,Acd2K7Nwj0uN/CopipemXg,,,N,0,0,,,2014-04-05 12:27,2014-04-05 13:21,admin,admin,
1646,141389,1749,35753,1449,0,N,N,N,CP_Drtn,TT_Task,DT_FixedDUR2,TK_NotStart,ENGMEP8920,"2nd Basement  Earthing and Lighting  Protection Layout Submittal (Block 1,2,3)",,104,0,112,0,0,0,112,14,0,14,,,,2014-02-22 08:00,2014-03-09 16:00,,2014-02-06 08:00,2014-02-22 16:00,2014-02-06 08:00,2014-02-22 16:00,2014-02-06 08:00,2014-02-22 16:00,2014-02-22 08:00,2014-03-09 16:00,,PT_Normal,,,,,Cj0Zx3ajyUa9U9DRNqVnzw,Lqugd3MAL0GRvqf70SQVPQ,,,N,0,0,,,2014-04-05 12:27,2014-04-05 13:21,admin,admin,
1647,141390,1749,35713,1449,0,N,N,N,CP_Drtn,TT_Task,DT_FixedDUR2,TK_NotStart,ENGMEP8810,"2nd Basement  Power Layout Approval (Block 1,2,3)",,1648,720,112,0,0,0,112,14,0,14,,,,2014-12-29 08:00,2015-01-13 16:00,,2014-05-03 08:00,2014-05-18 16:00,2014-05-03 08:00,2014-05-18 16:00,2014-05-03 08:00,2014-05-18 16:00,2014-12-29 08:00,2015-01-13 16:00,,PT_Normal,,,,,98ahtp3CLkmTg2hzHEN+bw,Dyr4OttJn0uaP6eV78PF6g,,,N,0,0,,,2014-04-05 12:27,2014-04-05 13:21,admin,admin,
1648,141391,1749,35713,1449,0,N,N,N,CP_Drtn,TT_Task,DT_FixedDUR2,TK_NotStart,ENGMEP8820,"1st Basement Power Layout Approval (Block 1,2,3)",,1728,912,112,0,0,0,112,14,0,14,,,,2015-01-26 08:00,2015-02-10 16:00,,2014-05-19 08:00,2014-06-03 16:00,2014-05-19 08:00,2014-06-03 16:00,2014-05-19 08:00,2014-06-03 16:00,2015-01-26 08:00,2015-02-10 16:00,,PT_Normal,,,,,Pm+KugHN3kG0ng5/3v/mJQ,6vm4EtROq0iVSt5T630ceQ,,,N,0,0,,,2014-04-05 12:27,2014-04-05 13:21,admin,admin,
1649,141392,1749,35713,1449,0,N,N,N,CP_Drtn,TT_Task,DT_FixedDUR2,TK_NotStart,ENGMEP8830,"Ground Floor Power Layout Approval (Block 1,2,3)",,1712,1096,112,0,0,0,112,14,0,14,,,,2015-02-09 08:00,2015-02-24 16:00,,2014-06-04 08:00,2014-06-19 16:00,2014-06-04 08:00,2014-06-19 16:00,2014-06-04 08:00,2014-06-19 16:00,2015-02-09 08:00,2015-02-24 16:00,,PT_Normal,,,,,9BmomQqMm06D8aGIXVaMHg,BkM9JdAiq022VRhZMWvz1w,,,N,0,0,,,2014-04-05 12:27,2014-04-05 13:21,admin,admin,
1650,141393,1749,35713,1449,0,N,N,N,CP_Drtn,TT_Task,DT_FixedDUR2,TK_NotStart,ENGMEP8840,Level 1 to Level 7  Block [1]  Power Layout Approval,,2320,1176,112,0,0,0,112,14,0,14,,,,2015-05-25 08:00,2015-06-09 16:00,,2014-06-21 08:00,2014-07-06 16:00,2014-06-21 08:00,2014-07-06 16:00,2014-06-21 08:00,2014-07-06 16:00,2015-05-25 08:00,2015-06-09 16:00,,PT_Normal,,,,,igkWts03fkK01s6DZa1hnQ,KQlp1w08rkCvUhROaGWeLw,,,N,0,0,,,2014-04-05 12:27,2014-04-05 13:21,admin,admin,
1651,141394,1749,35713,1449,0,N,N,N,CP_Drtn,TT_Task,DT_FixedDUR2,TK_NotStart,ENGMEP8850,Level 1 to Level 9  Block [2]  Power Layout Approval,,1760,1408,112,0,0,0,112,14,0,14,,,,2015-03-21 08:00,2015-04-05 16:00,,2014-07-07 08:00,2014-07-22 16:00,2014-07-07 08:00,2014-07-22 16:00,2014-07-07 08:00,2014-07-22 16:00,2015-03-21 08:00,2015-04-05 16:00,,PT_Normal,,,,,+SEHwzAW/EuA7DKD1b2IPw,PsoIINqgL0Oevivox+7U1A,,,N,0,0,,,2014-04-05 12:27,2014-04-05 13:21,admin,admin,
1652,141395,1749,35713,1449,0,N,N,N,CP_Drtn,TT_Task,DT_FixedDUR2,TK_NotStart,ENGMEP8860,Level 1 to Level 11  Block [3]  Power Layout Approval,,1552,1496,112,0,0,0,112,14,0,14,,,,2015-03-07 08:00,2015-03-22 16:00,,2014-07-23 08:00,2014-08-07 16:00,2014-07-23 08:00,2014-08-07 16:00,2014-07-23 08:00,2014-08-07 16:00,2015-03-07 08:00,2015-03-22 16:00,,PT_Normal,,,,,WnNzDYf7XUm9f+tfGlokqg,MsNi/UjvAU2jHGUr1HqODA,,,N,0,0,,,2014-04-05 12:27,2014-04-05 13:21,admin,admin,
1653,141396,1749,35713,1449,0,N,N,N,CP_Drtn,TT_Task,DT_FixedDUR2,TK_NotStart,ENGMEP8870,"Roof Floor  Block  ( 1,2,3 ) Lighting Protection Layout Approval",,3600,2048,112,0,0,0,112,14,0,14,,,,2016-01-16 08:00,2016-01-31 16:00,,2014-08-09 08:00,2014-08-24 16:00,2014-08-09 08:00,2014-08-24 16:00,2014-08-09 08:00,2014-08-24 16:00,2016-01-16 08:00,2016-01-31 16:00,,PT_Normal,,,,,DWmVEuTxVEi8xNmpU3tTGw,5SECchEidEu3OWpgyaOq0Q,,,N,0,0,,,2014-04-05 12:27,2014-04-05 13:21,admin,admin,
1654,141397,1749,35713,1449,0,N,N,N,CP_Drtn,TT_Task,DT_FixedDUR2,TK_NotStart,ENGMEP8880,"Power Riser Diagram Block  ( 1,2,3 ) Layout Approval",,2512,2096,112,0,0,0,112,14,0,14,,,,2015-08-26 08:00,2015-09-10 16:00,,2014-08-25 08:00,2014-09-09 16:00,2014-08-25 08:00,2014-09-09 16:00,2014-08-25 08:00,2014-09-09 16:00,2015-08-26 08:00,2015-09-10 16:00,,PT_Normal,,,,,0sU9jmpsJkSmuBIao1QBjw,Pkj2nY6jZkGb6bRd1MD7kw,,,N,0,0,,,2014-04-05 12:27,2014-04-05 13:21,admin,admin,
1655,141398,1749,35713,1449,0,N,N,N,CP_Drtn,TT_Task,DT_FixedDUR2,TK_NotStart,ENGMEP8890,"LV Room  Details  Block  ( 1,2,3 ) Layout Approval",,2400,1984,112,0,0,0,112,14,0,14,,,,2015-08-26 08:00,2015-09-10 16:00,,2014-09-10 08:00,2014-09-25 16:00,2014-09-10 08:00,2014-09-25 16:00,2014-09-10 08:00,2014-09-25 16:00,2015-08-26 08:00,2015-09-10 16:00,,PT_Normal,,,,,E9PyvZISiU+sRg64JIvGzQ,2mX/HXhzhkaYoOutvkNm1g,,,N,0,0,,,2014-04-05 12:27,2014-04-05 13:21,admin,admin,
1656,141399,1749,35713,1449,0,N,N,N,CP_Drtn,TT_Task,DT_FixedDUR2,TK_NotStart,ENGMEP8900,"Substation Room Details  Block  ( 1,2,3 ) Layout Approval",,2288,1872,112,0,0,0,112,14,0,14,,,,2015-08-26 08:00,2015-09-10 16:00,,2014-09-27 08:00,2014-10-12 16:00,2014-09-27 08:00,2014-10-12 16:00,2014-09-27 08:00,2014-10-12 16:00,2015-08-26 08:00,2015-09-10 16:00,,PT_Normal,,,,,1wNYq112lUy2xjDb3bKKrw,xv9S8cMo0EqQoEP2ByjyoA,,,N,0,0,,,2014-04-05 12:27,2014-04-05 13:21,admin,admin,
1657,141400,1749,35713,1449,0,N,N,N,CP_Drtn,TT_Task,DT_FixedDUR2,TK_NotStart,ENGMEP8910,"2nd Basement  Earthing and Lighting  Protection Layout  Approval (Block 1,2,3)",,104,104,112,0,0,0,112,14,0,14,,,,2014-03-10 08:00,2014-03-25 16:00,,2014-02-23 08:00,2014-03-10 16:00,2014-02-23 08:00,2014-03-10 16:00,2014-02-23 08:00,2014-03-10 16:00,2014-03-10 08:00,2014-03-25 16:00,,PT_Normal,,,,,jKDflDBMAkyS4iW7xbZvgA,07HcWegQkU6fDLnx06Le3A,,,N,0,0,,,2014-04-05 12:27,2014-04-05 13:21,admin,admin,
1658,141401,1749,35842,1449,0,N,N,N,CP_Drtn,TT_Task,DT_FixedDUR2,TK_NotStart,ENGMEP9400,"2nd Basement  Telephone & TV  Layout Submittal (Block 1,2,3)",,1328,0,112,0,0,0,112,14,0,14,,,,2014-11-12 08:00,2014-11-27 16:00,,2014-05-03 08:00,2014-05-18 16:00,2014-05-03 08:00,2014-05-18 16:00,2014-05-03 08:00,2014-05-18 16:00,2014-11-12 08:00,2014-11-27 16:00,,PT_Normal,,,,,sQShXO/O+kiHLJA0sdE77A,AIIwRCrLwk+6xuc5jcD0Uw,,,N,0,0,,,2014-04-05 12:27,2014-04-05 13:21,admin,admin,
1659,141402,1749,35842,1449,0,N,N,N,CP_Drtn,TT_Task,DT_FixedDUR2,TK_NotStart,ENGMEP9410,"1st Basement Telephone & TV  Layout Submittal (Block 1,2,3)",,1440,0,112,0,0,0,112,14,0,14,,,,2014-12-15 08:00,2014-12-30 16:00,,2014-05-19 08:00,2014-06-03 16:00,2014-05-19 08:00,2014-06-03 16:00,2014-05-19 08:00,2014-06-03 16:00,2014-12-15 08:00,2014-12-30 16:00,,PT_Normal,,,,,wS0Y47WUj0yYK0k2RDph8w,UQkhKMMc3k6nWGy1mp95Gg,,,N,0,0,,,2014-04-05 12:27,2014-04-05 13:21,admin,admin,
1660,141403,1749,35842,1449,0,N,N,N,CP_Drtn,TT_Task,DT_FixedDUR2,TK_NotStart,ENGMEP9420,"Ground Floor Telephone & TV  Layout Submittal (Block 1,2,3)",,1440,0,112,0,0,0,112,14,0,14,,,,2014-12-31 08:00,2015-01-15 16:00,,2014-06-04 08:00,2014-06-19 16:00,2014-06-04 08:00,2014-06-19 16:00,2014-06-04 08:00,2014-06-19 16:00,2014-12-31 08:00,2015-01-15 16:00,,PT_Normal,,,,,WPMwFa87sUuaIaJuaPx/Ng,eSXBrtMMWUKkdyWPCCrLSg,,,N,0,0,,,2014-04-05 12:27,2014-04-05 13:21,admin,admin,
1661,141404,1749,35842,1449,0,N,N,N,CP_Drtn,TT_Task,DT_FixedDUR2,TK_NotStart,ENGMEP9430,Level 1 to Level 7  Block [1]  Telephone & TV  Layout Submittal,,1440,0,112,0,0,0,112,14,0,14,,,,2015-01-17 08:00,2015-02-01 16:00,,2014-06-21 08:00,2014-07-06 16:00,2014-06-21 08:00,2014-07-06 16:00,2014-06-21 08:00,2014-07-06 16:00,2015-01-17 08:00,2015-02-01 16:00,,PT_Normal,,,,,KOBTvXKRE0qCN1N/jLgoqg,b/qDBD0YXE6VAt4p5VSfcA,,,N,0,0,,,2014-04-05 12:27,2014-04-05 13:21,admin,admin,
1662,141405,1749,35842,1449,0,N,N,N,CP_Drtn,TT_Task,DT_FixedDUR2,TK_NotStart,ENGMEP9440,Level 1 to Level 9  Block [2]  Telephone & TV  Layout Submittal,,1440,0,112,0,0,0,112,14,0,14,,,,2015-02-02 08:00,2015-02-17 16:00,,2014-07-07 08:00,2014-07-22 16:00,2014-07-07 08:00,2014-07-22 16:00,2014-07-07 08:00,2014-07-22 16:00,2015-02-02 08:00,2015-02-17 16:00,,PT_Normal,,,,,GG/tz/VeZ0a8VnlpTUIslg,jJgH6s7+hU2EiK6z5mjvJw,,,N,0,0,,,2014-04-05 12:27,2014-04-05 13:21,admin,admin,
1663,141406,1749,35842,1449,0,N,N,N,CP_Drtn,TT_Task,DT_FixedDUR2,TK_NotStart,ENGMEP9450,Level 1 to Level 11  Block [3]  Telephone & TV  Layout Submittal,,1440,0,112,0,0,0,112,14,0,14,,,,2015-02-18 08:00,2015-03-05 16:00,,2014-07-23 08:00,2014-08-07 16:00,2014-07-23 08:00,2014-08-07 16:00,2014-07-23 08:00,2014-08-07 16:00,2015-02-18 08:00,2015-03-05 16:00,,PT_Normal,,,,,Xwn1GjzlSUWRqoWRVBj8+Q,Z4rgSQ8g2EmOcrqZYDzKBw,,,N,0,0,,,2014-04-05 12:27,2014-04-05 13:21,admin,admin,
1664,141407,1749,35843,1449,0,N,N,N,CP_Drtn,TT_Task,DT_FixedDUR2,TK_NotStart,ENGMEP9470,"2nd Basement Telephone & TV  Layout Approval (Block 1,2,3)",,1536,608,112,0,0,0,112,14,0,14,,,,2014-12-29 08:00,2015-01-13 16:00,,2014-05-19 08:00,2014-06-03 16:00,2014-05-19 08:00,2014-06-03 16:00,2014-05-19 08:00,2014-06-03 16:00,2014-12-29 08:00,2015-01-13 16:00,,PT_Normal,,,,,7vxd824XBUeszl34ImcLpQ,7n/9GXo5IE+UyUX5p86rtA,,,N,0,0,,,2014-04-05 12:27,2014-04-05 13:21,admin,admin,
1665,141408,1749,35843,1449,0,N,N,N,CP_Drtn,TT_Task,DT_FixedDUR2,TK_NotStart,ENGMEP9480,"1st Basement Telephone & TV  Layout Approval (Block 1,2,3)",,1616,800,112,0,0,0,112,14,0,14,,,,2015-01-26 08:00,2015-02-10 16:00,,2014-06-04 08:00,2014-06-19 16:00,2014-06-04 08:00,2014-06-19 16:00,2014-06-04 08:00,2014-06-19 16:00,2015-01-26 08:00,2015-02-10 16:00,,PT_Normal,,,,,zP5SVbCJwEytLUE3zkIyFg,i98ZjCAXR0KoMZkcm/ZXZQ,,,N,0,0,,,2014-04-05 12:27,2014-04-05 13:21,admin,admin,
1666,141409,1749,35843,1449,0,N,N,N,CP_Drtn,TT_Task,DT_FixedDUR2,TK_NotStart,ENGMEP9490,"Ground Floor Telephone & TV  Layout Approval (Block 1,2,3)",,1600,984,112,0,0,0,112,14,0,14,,,,2015-02-09 08:00,2015-02-24 16:00,,2014-06-21 08:00,2014-07-06 16:00,2014-06-21 08:00,2014-07-06 16:00,2014-06-21 08:00,2014-07-06 16:00,2015-02-09 08:00,2015-02-24 16:00,,PT_Normal,,,,,UtDAyUhK702sZlLu8nnsDw,AGcrDAyusk2xPLTZ6CIksA,,,N,0,0,,,2014-04-05 12:27,2014-04-05 13:21,admin,admin,
1667,141410,1749,35843,1449,0,N,N,N,CP_Drtn,TT_Task,DT_FixedDUR2,TK_NotStart,ENGMEP9500,Level 1 to Level 7  Block [1]  Telephone & TV  Layout Approval,,2208,1064,112,0,0,0,112,14,0,14,,,,2015-05-25 08:00,2015-06-09 16:00,,2014-07-07 08:00,2014-07-22 16:00,2014-07-07 08:00,2014-07-22 16:00,2014-07-07 08:00,2014-07-22 16:00,2015-05-25 08:00,2015-06-09 16:00,,PT_Normal,,,,,0cVqxecva0C+wbcCYtrpPg,oUAPRYpjoEadVRt8dZL8jg,,,N,0,0,,,2014-04-05 12:27,2014-04-05 13:21,admin,admin,
1668,141411,1749,35843,1449,0,N,N,N,CP_Drtn,TT_Task,DT_FixedDUR2,TK_NotStart,ENGMEP9510,Level 1 to Level 9  Block [2]  Telephone & TV  Layout Approval,,1648,1296,112,0,0,0,112,14,0,14,,,,2015-03-21 08:00,2015-04-05 16:00,,2014-07-23 08:00,2014-08-07 16:00,2014-07-23 08:00,2014-08-07 16:00,2014-07-23 08:00,2014-08-07 16:00,2015-03-21 08:00,2015-04-05 16:00,,PT_Normal,,,,,gRSa2VgtCkW1DK/ExwlrJA,T/b6gDuUCEaUzOB+pBO7bA,,,N,0,0,,,2014-04-05 12:27,2014-04-05 13:21,admin,admin,
1669,141412,1749,35843,1449,0,N,N,N,CP_Drtn,TT_Task,DT_FixedDUR2,TK_NotStart,ENGMEP9520,Level 1 to Level 11  Block [3]  Telephone & TV  Layout Approval,,1440,1384,112,0,0,0,112,14,0,14,,,,2015-03-07 08:00,2015-03-22 16:00,,2014-08-09 08:00,2014-08-24 16:00,2014-08-09 08:00,2014-08-24 16:00,2014-08-09 08:00,2014-08-24 16:00,2015-03-07 08:00,2015-03-22 16:00,,PT_Normal,,,,,O/ogkRuqaE2nHmjtMrlzJw,T5mV7mggSEKzPc+Wx7pOOw,,,N,0,0,,,2014-04-05 12:27,2014-04-05 13:21,admin,admin,
1670,141413,1749,35904,1449,0,N,N,N,CP_Drtn,TT_Task,DT_FixedDUR2,TK_NotStart,ENGMEP9090,"2nd Basement  Fire Alarm Layout Submittal (Block 1,2,3)",,1328,0,112,0,0,0,112,14,0,14,,,,2014-11-29 08:00,2014-12-14 16:00,,2014-05-19 08:00,2014-06-03 16:00,2014-05-19 08:00,2014-06-03 16:00,2014-05-19 08:00,2014-06-03 16:00,2014-11-29 08:00,2014-12-14 16:00,,PT_Normal,,,,,j+ERTouKsEGxaFjnAS9RFQ,gZbQwYsC5kq4WfDgeusxSA,,,N,0,0,,,2014-04-05 12:27,2014-04-05 13:21,admin,admin,
1671,141414,1749,35904,1449,0,N,N,N,CP_Drtn,TT_Task,DT_FixedDUR2,TK_NotStart,ENGMEP9100,"1st Basement Fire Alarm Layout Submittal (Block 1,2,3)",,1328,0,112,0,0,0,112,14,0,14,,,,2014-12-15 08:00,2014-12-30 16:00,,2014-06-04 08:00,2014-06-19 16:00,2014-06-04 08:00,2014-06-19 16:00,2014-06-04 08:00,2014-06-19 16:00,2014-12-15 08:00,2014-12-30 16:00,,PT_Normal,,,,,j+WmrS/9ok+xNtj/K4OiIA,LdPs7nSKWU2iKlFS3TGruQ,,,N,0,0,,,2014-04-05 12:27,2014-04-05 13:21,admin,admin,
1672,141415,1749,35904,1449,0,N,N,N,CP_Drtn,TT_Task,DT_FixedDUR2,TK_NotStart,ENGMEP9110,"Ground Floor Fire Alarm Layout Submittal (Block 1,2,3)",,1328,0,112,0,0,0,112,14,0,14,,,,2014-12-31 08:00,2015-01-15 16:00,,2014-06-21 08:00,2014-07-06 16:00,2014-06-21 08:00,2014-07-06 16:00,2014-06-21 08:00,2014-07-06 16:00,2014-12-31 08:00,2015-01-15 16:00,,PT_Normal,,,,,3pS/dhkStECh68IQfTXTBg,M2NDomPGUkq901Go3EXvNw,,,N,0,0,,,2014-04-05 12:27,2014-04-05 13:21,admin,admin,
1673,141416,1749,35904,1449,0,N,N,N,CP_Drtn,TT_Task,DT_FixedDUR2,TK_NotStart,ENGMEP9120,Level 1 to Level 7  Block [1]  Fire Alarm Layout Submittal,,1328,0,112,0,0,0,112,14,0,14,,,,2015-01-17 08:00,2015-02-01 16:00,,2014-07-07 08:00,2014-07-22 16:00,2014-07-07 08:00,2014-07-22 16:00,2014-07-07 08:00,2014-07-22 16:00,2015-01-17 08:00,2015-02-01 16:00,,PT_Normal,,,,,j5U8E91hVEuC/ZrFkUZSvA,g9yM8GGMkEaK6PXIb5/Pmw,,,N,0,0,,,2014-04-05 12:27,2014-04-05 13:21,admin,admin,
1674,141417,1749,35904,1449,0,N,N,N,CP_Drtn,TT_Task,DT_FixedDUR2,TK_NotStart,ENGMEP9130,Level 1 to Level 9  Block [2]  Fire Alarm Layout Submittal,,1328,0,112,0,0,0,112,14,0,14,,,,2015-02-02 08:00,2015-02-17 16:00,,2014-07-23 08:00,2014-08-07 16:00,2014-07-23 08:00,2014-08-07 16:00,2014-07-23 08:00,2014-08-07 16:00,2015-02-02 08:00,2015-02-17 16:00,,PT_Normal,,,,,N27NPBkvj0ijlgTrm2Hp0g,1G9tMGBEE0SJRbYywe3joQ,,,N,0,0,,,2014-04-05 12:27,2014-04-05 13:21,admin,admin,
1675,141418,1749,35904,1449,0,N,N,N,CP_Drtn,TT_Task,DT_FixedDUR2,TK_NotStart,ENGMEP9140,Level 1 to Level 11  Block [3]  Fire Alarm Layout Submittal,,1328,0,112,0,0,0,112,14,0,14,,,,2015-02-18 08:00,2015-03-05 16:00,,2014-08-09 08:00,2014-08-24 16:00,2014-08-09 08:00,2014-08-24 16:00,2014-08-09 08:00,2014-08-24 16:00,2015-02-18 08:00,2015-03-05 16:00,,PT_Normal,,,,,27yqiE88wUSlWtSHUINLfQ,i6qL9l+4q06SlWun6Wm9mA,,,N,0,0,,,2014-04-05 12:27,2014-04-05 13:21,admin,admin,
1676,141419,1749,35860,1449,0,N,N,N,CP_Drtn,TT_Task,DT_FixedDUR2,TK_NotStart,ENGMEP9190,"2nd Basement  Fire Alarm Layout Approval (Block 1,2,3)",,1424,496,112,0,0,0,112,14,0,14,,,,2014-12-29 08:00,2015-01-13 16:00,,2014-06-04 08:00,2014-06-19 16:00,2014-06-04 08:00,2014-06-19 16:00,2014-06-04 08:00,2014-06-19 16:00,2014-12-29 08:00,2015-01-13 16:00,,PT_Normal,,,,,vIl01YHzoUG92ZGLuMld+Q,RPGZPFZnMkqa+5wGoZD8Dg,,,N,0,0,,,2014-04-05 12:27,2014-04-05 13:21,admin,admin,
1677,141420,1749,35860,1449,0,N,N,N,CP_Drtn,TT_Task,DT_FixedDUR2,TK_NotStart,ENGMEP9200,"1st Basement Fire Alarm Layout Approval (Block 1,2,3)",,1504,688,112,0,0,0,112,14,0,14,,,,2015-01-26 08:00,2015-02-10 16:00,,2014-06-21 08:00,2014-07-06 16:00,2014-06-21 08:00,2014-07-06 16:00,2014-06-21 08:00,2014-07-06 16:00,2015-01-26 08:00,2015-02-10 16:00,,PT_Normal,,,,,sk5pSvvoFkaO83KOJahBHA,yKbVXo6B6EyhFenYlKNSZQ,,,N,0,0,,,2014-04-05 12:27,2014-04-05 13:21,admin,admin,
1678,141421,1749,35860,1449,0,N,N,N,CP_Drtn,TT_Task,DT_FixedDUR2,TK_NotStart,ENGMEP9210,"Ground Floor Fire Alarm Layout Approval (Block 1,2,3)",,1488,872,112,0,0,0,112,14,0,14,,,,2015-02-09 08:00,2015-02-24 16:00,,2014-07-07 08:00,2014-07-22 16:00,2014-07-07 08:00,2014-07-22 16:00,2014-07-07 08:00,2014-07-22 16:00,2015-02-09 08:00,2015-02-24 16:00,,PT_Normal,,,,,hpXeuEo0R0KP3u9wmgeT/w,+Pe9kl+DXEqSE0FCBWUP9Q,,,N,0,0,,,2014-04-05 12:27,2014-04-05 13:21,admin,admin,
1679,141422,1749,35860,1449,0,N,N,N,CP_Drtn,TT_Task,DT_FixedDUR2,TK_NotStart,ENGMEP9220,Level 1 to Level 7  Block [1]  Fire Alarm Layout Approval,,2096,952,112,0,0,0,112,14,0,14,,,,2015-05-25 08:00,2015-06-09 16:00,,2014-07-23 08:00,2014-08-07 16:00,2014-07-23 08:00,2014-08-07 16:00,2014-07-23 08:00,2014-08-07 16:00,2015-05-25 08:00,2015-06-09 16:00,,PT_Normal,,,,,toVcGDDnGUyq/eKCP45fVQ,ZJZcZ8hLhkqx1VePR4yhtA,,,N,0,0,,,2014-04-05 12:27,2014-04-05 13:21,admin,admin,
1680,141423,1749,35860,1449,0,N,N,N,CP_Drtn,TT_Task,DT_FixedDUR2,TK_NotStart,ENGMEP9230,Level 1 to Level 9  Block [2]  Fire Alarm Layout Approval,,1536,1184,112,0,0,0,112,14,0,14,,,,2015-03-21 08:00,2015-04-05 16:00,,2014-08-09 08:00,2014-08-24 16:00,2014-08-09 08:00,2014-08-24 16:00,2014-08-09 08:00,2014-08-24 16:00,2015-03-21 08:00,2015-04-05 16:00,,PT_Normal,,,,,FZP7tEcXoEqug7FO8ouLBA,kZYhCPYcwUCTKrTiEIRzoA,,,N,0,0,,,2014-04-05 12:27,2014-04-05 13:21,admin,admin,
1681,141424,1749,35860,1449,0,N,N,N,CP_Drtn,TT_Task,DT_FixedDUR2,TK_NotStart,ENGMEP9240,Level 1 to Level 11  Block [3]  Fire Alarm Layout Approval,,1328,1272,112,0,0,0,112,14,0,14,,,,2015-03-07 08:00,2015-03-22 16:00,,2014-08-25 08:00,2014-09-09 16:00,2014-08-25 08:00,2014-09-09 16:00,2014-08-25 08:00,2014-09-09 16:00,2015-03-07 08:00,2015-03-22 16:00,,PT_Normal,,,,,9sEoSeDE4U26kKi4HunvXQ,oIg76jIPRkG1YQFIZ1Y0Qg,,,N,0,0,,,2014-04-05 12:27,2014-04-05 13:21,admin,admin,
1682,141425,1749,35839,1449,0,N,N,N,CP_Drtn,TT_Task,DT_FixedDUR2,TK_NotStart,ENGMEP9540,"2nd Basement  CCTV Layout Submittal (Block 1,2,3)",,1328,0,112,0,0,0,112,14,0,14,,,,2014-11-29 08:00,2014-12-14 16:00,,2014-05-19 08:00,2014-06-03 16:00,2014-05-19 08:00,2014-06-03 16:00,2014-05-19 08:00,2014-06-03 16:00,2014-11-29 08:00,2014-12-14 16:00,,PT_Normal,,,,,HdGGl9wATkKKt05fG8K1fw,AJp2i3R9E0Opz1757+1SCA,,,N,0,0,,,2014-04-05 12:27,2014-04-05 13:21,admin,admin,
1683,141426,1749,35839,1449,0,N,N,N,CP_Drtn,TT_Task,DT_FixedDUR2,TK_NotStart,ENGMEP9550,"1st Basement CCTV Layout Submittal (Block 1,2,3)",,1328,0,112,0,0,0,112,14,0,14,,,,2014-12-15 08:00,2014-12-30 16:00,,2014-06-04 08:00,2014-06-19 16:00,2014-06-04 08:00,2014-06-19 16:00,2014-06-04 08:00,2014-06-19 16:00,2014-12-15 08:00,2014-12-30 16:00,,PT_Normal,,,,,rffuMMBs+UidbyWghhIKpQ,kMYNA6K9B0e0zDZOJoecqw,,,N,0,0,,,2014-04-05 12:27,2014-04-05 13:21,admin,admin,
1684,141427,1749,35839,1449,0,N,N,N,CP_Drtn,TT_Task,DT_FixedDUR2,TK_NotStart,ENGMEP9560,"Ground Floor CCTV Layout Submittal (Block 1,2,3)",,1328,0,112,0,0,0,112,14,0,14,,,,2014-12-31 08:00,2015-01-15 16:00,,2014-06-21 08:00,2014-07-06 16:00,2014-06-21 08:00,2014-07-06 16:00,2014-06-21 08:00,2014-07-06 16:00,2014-12-31 08:00,2015-01-15 16:00,,PT_Normal,,,,,6agBkbRCXkuKy8TgcZbnuQ,0FJSM2uiYESe4WV8ls8qSQ,,,N,0,0,,,2014-04-05 12:27,2014-04-05 13:21,admin,admin,
1685,141428,1749,35839,1449,0,N,N,N,CP_Drtn,TT_Task,DT_FixedDUR2,TK_NotStart,ENGMEP9570,Level 1 to Level 7  Block [1]  CCTV Layout Submittal,,1328,0,112,0,0,0,112,14,0,14,,,,2015-01-17 08:00,2015-02-01 16:00,,2014-07-07 08:00,2014-07-22 16:00,2014-07-07 08:00,2014-07-22 16:00,2014-07-07 08:00,2014-07-22 16:00,2015-01-17 08:00,2015-02-01 16:00,,PT_Normal,,,,,We/zRRsgXU66JrthGyb7bg,Ix9A1xU+G0mMC6JJskiWrQ,,,N,0,0,,,2014-04-05 12:27,2014-04-05 13:21,admin,admin,
1686,141429,1749,35839,1449,0,N,N,N,CP_Drtn,TT_Task,DT_FixedDUR2,TK_NotStart,ENGMEP9580,Level 1 to Level 9  Block [2]  CCTV Layout Submittal,,1328,0,112,0,0,0,112,14,0,14,,,,2015-02-02 08:00,2015-02-17 16:00,,2014-07-23 08:00,2014-08-07 16:00,2014-07-23 08:00,2014-08-07 16:00,2014-07-23 08:00,2014-08-07 16:00,2015-02-02 08:00,2015-02-17 16:00,,PT_Normal,,,,,q0naWROUzEWlBytlP2ZP8w,6w8c7SiiPkW7DvxSyeIxxA,,,N,0,0,,,2014-04-05 12:27,2014-04-05 13:21,admin,admin,
1687,141430,1749,35839,1449,0,N,N,N,CP_Drtn,TT_Task,DT_FixedDUR2,TK_NotStart,ENGMEP9590,Level 1 to Level 11  Block [3]  CCTV Layout Submittal,,1328,0,112,0,0,0,112,14,0,14,,,,2015-02-18 08:00,2015-03-05 16:00,,2014-08-09 08:00,2014-08-24 16:00,2014-08-09 08:00,2014-08-24 16:00,2014-08-09 08:00,2014-08-24 16:00,2015-02-18 08:00,2015-03-05 16:00,,PT_Normal,,,,,ULvZkY/2SUW8Qhxk1g7xpg,PFUxkHMYRUKk0HhDZhEPEw,,,N,0,0,,,2014-04-05 12:27,2014-04-05 13:21,admin,admin,
1688,141431,1749,35840,1449,0,N,N,N,CP_Drtn,TT_Task,DT_FixedDUR2,TK_NotStart,ENGMEP9610,"2nd Basement CCTV Layout Approval (Block 1,2,3)",,1424,496,112,0,0,0,112,14,0,14,,,,2014-12-29 08:00,2015-01-13 16:00,,2014-06-04 08:00,2014-06-19 16:00,2014-06-04 08:00,2014-06-19 16:00,2014-06-04 08:00,2014-06-19 16:00,2014-12-29 08:00,2015-01-13 16:00,,PT_Normal,,,,,I+lbfPFdwUChs1PDMP3LJQ,QMIRxBXkn0STh+q5A6gJuQ,,,N,0,0,,,2014-04-05 12:27,2014-04-05 13:21,admin,admin,
1689,141432,1749,35840,1449,0,N,N,N,CP_Drtn,TT_Task,DT_FixedDUR2,TK_NotStart,ENGMEP9620,"1st Basement CCTV Layout Approval (Block 1,2,3)",,1504,688,112,0,0,0,112,14,0,14,,,,2015-01-26 08:00,2015-02-10 16:00,,2014-06-21 08:00,2014-07-06 16:00,2014-06-21 08:00,2014-07-06 16:00,2014-06-21 08:00,2014-07-06 16:00,2015-01-26 08:00,2015-02-10 16:00,,PT_Normal,,,,,uFbD2V8P8EmmgKENNQS/2g,Tfo4qQ/RBU+cQbE944Pxdg,,,N,0,0,,,2014-04-05 12:27,2014-04-05 13:21,admin,admin,
1690,141433,1749,35840,1449,0,N,N,N,CP_Drtn,TT_Task,DT_FixedDUR2,TK_NotStart,ENGMEP9630,"Ground Floor CCTV Layout Approval (Block 1,2,3)",,1488,872,112,0,0,0,112,14,0,14,,,,2015-02-09 08:00,2015-02-24 16:00,,2014-07-07 08:00,2014-07-22 16:00,2014-07-07 08:00,2014-07-22 16:00,2014-07-07 08:00,2014-07-22 16:00,2015-02-09 08:00,2015-02-24 16:00,,PT_Normal,,,,,PYoGOY++JUus4n4ia4o9pw,E8/yX8fusUWRwkPwJfXHQw,,,N,0,0,,,2014-04-05 12:27,2014-04-05 13:21,admin,admin,
1691,141434,1749,35840,1449,0,N,N,N,CP_Drtn,TT_Task,DT_FixedDUR2,TK_NotStart,ENGMEP9640,Level 1 to Level 7  Block [1]  CCTV Layout Approval,,2096,952,112,0,0,0,112,14,0,14,,,,2015-05-25 08:00,2015-06-09 16:00,,2014-07-23 08:00,2014-08-07 16:00,2014-07-23 08:00,2014-08-07 16:00,2014-07-23 08:00,2014-08-07 16:00,2015-05-25 08:00,2015-06-09 16:00,,PT_Normal,,,,,N41WEfPtoE+dci8yAGhXDQ,QqGF45VKf0OOyt3aHkXzxw,,,N,0,0,,,2014-04-05 12:27,2014-04-05 13:21,admin,admin,
1692,141435,1749,35840,1449,0,N,N,N,CP_Drtn,TT_Task,DT_FixedDUR2,TK_NotStart,ENGMEP9650,Level 1 to Level 9  Block [2]  CCTV Layout Approval,,1536,1184,112,0,0,0,112,14,0,14,,,,2015-03-21 08:00,2015-04-05 16:00,,2014-08-09 08:00,2014-08-24 16:00,2014-08-09 08:00,2014-08-24 16:00,2014-08-09 08:00,2014-08-24 16:00,2015-03-21 08:00,2015-04-05 16:00,,PT_Normal,,,,,yIvjxzls6kiuqta+ru+rCA,hBPmP3E87EuLCnZ3KVcBUw,,,N,0,0,,,2014-04-05 12:27,2014-04-05 13:21,admin,admin,
1693,141436,1749,35840,1449,0,N,N,N,CP_Drtn,TT_Task,DT_FixedDUR2,TK_NotStart,ENGMEP9660,Level 1 to Level 11  Block [3]  CCTV Layout Approval,,1328,1272,112,0,0,0,112,14,0,14,,,,2015-03-07 08:00,2015-03-22 16:00,,2014-08-25 08:00,2014-09-09 16:00,2014-08-25 08:00,2014-09-09 16:00,2014-08-25 08:00,2014-09-09 16:00,2015-03-07 08:00,2015-03-22 16:00,,PT_Normal,,,,,Bm5L2Ljl2U+g0+siZqH6bA,oVKERgSTKk+auhPUCCXYug,,,N,0,0,,,2014-04-05 12:27,2014-04-05 13:21,admin,admin,
1694,141437,1749,35916,1449,0,N,N,N,CP_Drtn,TT_Task,DT_FixedDUR2,TK_NotStart,ENGMEP8930,"2nd Basement  Lighting Layout Submittal (Block 1,2,3)",,1328,0,112,0,0,0,112,14,0,14,,,,2014-10-27 08:00,2014-11-11 16:00,,2014-04-16 08:00,2014-05-01 16:00,2014-04-16 08:00,2014-05-01 16:00,2014-04-16 08:00,2014-05-01 16:00,2014-10-27 08:00,2014-11-11 16:00,,PT_Normal,,,,,hno4zr91wki8rW5SJzMvIw,e8GmRVWhXUC8yY5/G6bLaw,,,N,0,0,,,2014-04-05 12:27,2014-04-05 13:21,admin,admin,
1695,141438,1749,35916,1449,0,N,N,N,CP_Drtn,TT_Task,DT_FixedDUR2,TK_NotStart,ENGMEP8940,"1st Basement Lighting Layout Submittal (Block 1,2,3)",,1552,0,112,0,0,0,112,14,0,14,,,,2014-12-15 08:00,2014-12-30 16:00,,2014-05-03 08:00,2014-05-18 16:00,2014-05-03 08:00,2014-05-18 16:00,2014-05-03 08:00,2014-05-18 16:00,2014-12-15 08:00,2014-12-30 16:00,,PT_Normal,,,,,vBgqoUFJxkWcHLUur1esbA,YEI2b/Xey0eh2dQ1NwH/0Q,,,N,0,0,,,2014-04-05 12:27,2014-04-05 13:21,admin,admin,
1696,141439,1749,35916,1449,0,N,N,N,CP_Drtn,TT_Task,DT_FixedDUR2,TK_NotStart,ENGMEP8950,"Ground Floor Lighting Layout Submittal (Block 1,2,3)",,1552,0,112,0,0,0,112,14,0,14,,,,2014-12-31 08:00,2015-01-15 16:00,,2014-05-19 08:00,2014-06-03 16:00,2014-05-19 08:00,2014-06-03 16:00,2014-05-19 08:00,2014-06-03 16:00,2014-12-31 08:00,2015-01-15 16:00,,PT_Normal,,,,,jfxTVmXQcUafCWrjqrGsog,1Xr5Qub3A0Cf8wyJdlolmQ,,,N,0,0,,,2014-04-05 12:27,2014-04-05 13:21,admin,admin,
1697,141440,1749,35916,1449,0,N,N,N,CP_Drtn,TT_Task,DT_FixedDUR2,TK_NotStart,ENGMEP8960,Level 1 to Level 7  Block [1]  Lighting Layout Submittal,,1552,0,112,0,0,0,112,14,0,14,,,,2015-01-17 08:00,2015-02-01 16:00,,2014-06-04 08:00,2014-06-19 16:00,2014-06-04 08:00,2014-06-19 16:00,2014-06-04 08:00,2014-06-19 16:00,2015-01-17 08:00,2015-02-01 16:00,,PT_Normal,,,,,PEm0pNL1E0eNp7G6ECYavg,g93tFwcN/EeMiHqyiopOYw,,,N,0,0,,,2014-04-05 12:27,2014-04-05 13:21,admin,admin,
1698,141441,1749,35916,1449,0,N,N,N,CP_Drtn,TT_Task,DT_FixedDUR2,TK_NotStart,ENGMEP8970,Level 1 to Level 9  Block [2]  Lighting Layout Submittal,,1552,0,112,0,0,0,112,14,0,14,,,,2015-02-02 08:00,2015-02-17 16:00,,2014-06-21 08:00,2014-07-06 16:00,2014-06-21 08:00,2014-07-06 16:00,2014-06-21 08:00,2014-07-06 16:00,2015-02-02 08:00,2015-02-17 16:00,,PT_Normal,,,,,r179UXdl+E6pX6X5g7pJDg,7u7GbQrG60CPASy/94HABA,,,N,0,0,,,2014-04-05 12:27,2014-04-05 13:21,admin,admin,
1699,141442,1749,35916,1449,0,N,N,N,CP_Drtn,TT_Task,DT_FixedDUR2,TK_NotStart,ENGMEP8980,Level 1 to Level 11  Block [3]  Lighting Layout Submittal,,1552,0,112,0,0,0,112,14,0,14,,,,2015-02-18 08:00,2015-03-05 16:00,,2014-07-07 08:00,2014-07-22 16:00,2014-07-07 08:00,2014-07-22 16:00,2014-07-07 08:00,2014-07-22 16:00,2015-02-18 08:00,2015-03-05 16:00,,PT_Normal,,,,,C/RwavnHv0K176an7QMBfw,ZcYgEnCCgUaF/MYdvAZ+RQ,,,N,0,0,,,2014-04-05 12:27,2014-04-05 13:21,admin,admin,
1700,141443,1749,35866,1449,0,N,N,N,CP_Drtn,TT_Task,DT_FixedDUR2,TK_NotStart,ENGMEP9030,"2nd Basement  Lighting Layout Approval (Block 1,2,3)",,1648,720,112,0,0,0,112,14,0,14,,,,2014-12-29 08:00,2015-01-13 16:00,,2014-05-03 08:00,2014-05-18 16:00,2014-05-03 08:00,2014-05-18 16:00,2014-05-03 08:00,2014-05-18 16:00,2014-12-29 08:00,2015-01-13 16:00,,PT_Normal,,,,,eoBi2kcjXkibH8f1R/IIjA,s4qxGQVd+06GWce5EUNRBg,,,N,0,0,,,2014-04-05 12:27,2014-04-05 13:21,admin,admin,
1701,141444,1749,35866,1449,0,N,N,N,CP_Drtn,TT_Task,DT_FixedDUR2,TK_NotStart,ENGMEP9040,"1st Basement Lighting Layout Approval (Block 1,2,3)",,1728,912,112,0,0,0,112,14,0,14,,,,2015-01-26 08:00,2015-02-10 16:00,,2014-05-19 08:00,2014-06-03 16:00,2014-05-19 08:00,2014-06-03 16:00,2014-05-19 08:00,2014-06-03 16:00,2015-01-26 08:00,2015-02-10 16:00,,PT_Normal,,,,,pHm5jf8jV0GOCTXjbRiEJw,iBfgaDbLxUauTPF9+AIu0w,,,N,0,0,,,2014-04-05 12:27,2014-04-05 13:21,admin,admin,
1702,141445,1749,35866,1449,0,N,N,N,CP_Drtn,TT_Task,DT_FixedDUR2,TK_NotStart,ENGMEP9050,"Ground Floor Lighting Layout Approval (Block 1,2,3)",,1712,1096,112,0,0,0,112,14,0,14,,,,2015-02-09 08:00,2015-02-24 16:00,,2014-06-04 08:00,2014-06-19 16:00,2014-06-04 08:00,2014-06-19 16:00,2014-06-04 08:00,2014-06-19 16:00,2015-02-09 08:00,2015-02-24 16:00,,PT_Normal,,,,,uISQhkTjGUuHamrBdVfCbA,Xg8Qm0qilUmZSEOyJslisQ,,,N,0,0,,,2014-04-05 12:27,2014-04-05 13:21,admin,admin,
1703,141446,1749,35866,1449,0,N,N,N,CP_Drtn,TT_Task,DT_FixedDUR2,TK_NotStart,ENGMEP9060,Level 1 to Level 7  Block [1]  Lighting Layout Approval,,2320,1176,112,0,0,0,112,14,0,14,,,,2015-05-25 08:00,2015-06-09 16:00,,2014-06-21 08:00,2014-07-06 16:00,2014-06-21 08:00,2014-07-06 16:00,2014-06-21 08:00,2014-07-06 16:00,2015-05-25 08:00,2015-06-09 16:00,,PT_Normal,,,,,//HGO9RpbUGWkfittV3HpQ,8uk1zC63RkmKhd8UsQjtNA,,,N,0,0,,,2014-04-05 12:27,2014-04-05 13:21,admin,admin,
1704,141447,1749,35866,1449,0,N,N,N,CP_Drtn,TT_Task,DT_FixedDUR2,TK_NotStart,ENGMEP9070,Level 1 to Level 9  Block [2]  Lighting Layout Approval,,1760,1408,112,0,0,0,112,14,0,14,,,,2015-03-21 08:00,2015-04-05 16:00,,2014-07-07 08:00,2014-07-22 16:00,2014-07-07 08:00,2014-07-22 16:00,2014-07-07 08:00,2014-07-22 16:00,2015-03-21 08:00,2015-04-05 16:00,,PT_Normal,,,,,dw2joi78rEGf14P0f41EWw,KnG8qFtfhk6BSQCT0lXcIg,,,N,0,0,,,2014-04-05 12:27,2014-04-05 13:21,admin,admin,
1705,141448,1749,35866,1449,0,N,N,N,CP_Drtn,TT_Task,DT_FixedDUR2,TK_NotStart,ENGMEP9080,Level 1 to Level 11  Block [3]  Lighting Layout Approval,,1552,1496,112,0,0,0,112,14,0,14,,,,2015-03-07 08:00,2015-03-22 16:00,,2014-07-23 08:00,2014-08-07 16:00,2014-07-23 08:00,2014-08-07 16:00,2014-07-23 08:00,2014-08-07 16:00,2015-03-07 08:00,2015-03-22 16:00,,PT_Normal,,,,,MX9yKf94OkCxFc3TRl1zlw,ZQex2dHRWkGhLCT41SN0Iw,,,N,0,0,,,2014-04-05 12:27,2014-04-05 13:21,admin,admin,
1706,141449,1749,35934,642,0,N,N,N,CP_Drtn,TT_Task,DT_FixedDUR2,TK_NotStart,OFF-PRO-MEP-DR1000,Issue Purchase Order of DR Pipe Supports & Clamps,,1176,0,96,0,0,0,96,12,0,12,,,,2014-10-21 08:00,2014-11-06 16:00,,2014-04-12 08:00,2014-04-24 16:00,2014-04-12 08:00,2014-04-24 16:00,2014-04-12 08:00,2014-04-24 16:00,2014-10-21 08:00,2014-11-06 16:00,,PT_Normal,,,,,4wTE5o3MWk2IJeDcFAFcBA,d8vcfaLm3E6VOuitzZkoxg,,,N,0,0,,,2014-04-05 12:27,2014-04-05 13:21,admin,admin,
1707,141450,1749,35934,1447,0,N,N,N,CP_Drtn,TT_Task,DT_FixedDUR2,TK_NotStart,OFF-PRO-MEP-DR1010,Manufacturing & Shipping of DR Pipe Supports & Clamps,,1576,2,560,0,0,0,560,70,0,70,,,,2014-11-08 08:00,2015-01-16 16:00,,2014-04-25 08:00,2014-07-03 16:00,2014-04-25 08:00,2014-07-03 16:00,2014-04-25 08:00,2014-07-03 16:00,2014-11-08 08:00,2015-01-16 16:00,,PT_Normal,,,,,rw1jBKrseUeb9BaDrPFXEg,rpwLi2vNRU+CsWrKK3/BZQ,,,N,0,0,,,2014-04-05 12:27,2014-04-05 13:21,admin,admin,
1708,141451,1749,35934,642,0,N,N,N,CP_Drtn,TT_Task,DT_FixedDUR2,TK_NotStart,OFF-PRO-MEP-DR1020,Clearance & Delivery to Site of DR Pipe Supports & Clamps,,1188,172,96,0,0,0,96,12,0,12,,,,2015-01-17 08:00,2015-01-29 16:00,,2014-07-04 10:00,2014-07-27 14:00,2014-07-04 10:00,2014-07-27 14:00,2014-07-04 10:00,2014-07-27 14:00,2015-01-17 08:00,2015-01-29 16:00,,PT_Normal,,,,,GjKQ8N1ZsEixFDbsRxvkKA,IfrV2eAaRkKOX5quNqwWNw,,,N,0,0,,,2014-04-05 12:27,2014-04-05 13:21,admin,admin,
1709,141452,1749,35977,642,0,N,N,N,CP_Drtn,TT_Task,DT_FixedDUR2,TK_NotStart,OFF-PRO-MEP-DR1090,Preparation & Submission of  Sweage Lifting  Pumps,,2096,0,480,0,0,0,480,60,0,60,,,,2015-06-10 08:00,2015-08-08 16:00,,2014-07-27 10:00,2014-10-12 16:00,2014-07-27 10:00,2014-10-12 16:00,2014-07-27 10:00,2014-10-12 16:00,2015-06-10 08:00,2015-08-08 16:00,,PT_Normal,,,,,AoGQBOxeNkOWX6Smxpav/g,VXDOgZE7LEa6rgUn9Nk7kA,,,N,0,0,,,2014-04-05 12:27,2014-04-05 13:21,admin,admin,
1710,141453,1749,35977,642,0,N,N,N,CP_Drtn,TT_Task,DT_FixedDUR2,TK_NotStart,OFF-PRO-MEP-DR1100,Review & Approval of Sweage Lifting  Pumps,,2096,0,96,0,0,0,96,12,0,12,,,,2015-08-09 08:00,2015-08-20 16:00,,2014-10-13 08:00,2014-10-27 16:00,2014-10-13 08:00,2014-10-27 16:00,2014-10-13 08:00,2014-10-27 16:00,2015-08-09 08:00,2015-08-20 16:00,,PT_Normal,,,,,X6Qyef/W1EKeL0t848OVHQ,XyTmZ8MhKUmpX+21V9xkrw,,,N,0,0,,,2014-04-05 12:27,2014-04-05 13:21,admin,admin,
1711,141454,1749,35977,642,0,N,N,N,CP_Drtn,TT_Task,DT_FixedDUR2,TK_NotStart,OFF-PRO-MEP-DR1110,Issue Purchase Order of Sweage Lifting  Pumps,,2096,0,96,0,0,0,96,12,0,12,,,,2015-08-21 08:00,2015-09-01 16:00,,2014-10-28 08:00,2014-11-12 16:00,2014-10-28 08:00,2014-11-12 16:00,2014-10-28 08:00,2014-11-12 16:00,2015-08-21 08:00,2015-09-01 16:00,,PT_Normal,,,,,cFTn2Xy1+EaBOBk2chkruA,WOoI9CKlmk21gPh3Ugucig,,,N,0,0,,,2014-04-05 12:27,2014-04-05 13:21,admin,admin,
1712,141455,1749,35977,1447,0,N,N,N,CP_Drtn,TT_Task,DT_FixedDUR2,TK_NotStart,OFF-PRO-MEP-DR1120,Manufacturing & Shipping of Sweage Lifting  Pumps,,2344,0,720,0,0,0,720,90,0,90,,,,2015-09-02 08:00,2015-11-30 16:00,,2014-11-13 08:00,2015-02-10 16:00,2014-11-13 08:00,2015-02-10 16:00,2014-11-13 08:00,2015-02-10 16:00,2015-09-02 08:00,2015-11-30 16:00,,PT_Normal,,,,,N4edXgsZAk+5siQ6du+UpQ,dRFThRpVV0CgZZbAUQphaQ,,,N,0,0,,,2014-04-05 12:27,2014-04-05 13:21,admin,admin,
1713,141456,1749,35977,642,0,N,N,N,CP_Drtn,TT_Task,DT_FixedDUR2,TK_NotStart,OFF-PRO-MEP-DR1130,Clearance & Delivery to Site of Sweage Lifting  Pumps,,2216,0,224,0,0,0,224,28,0,28,,,,2015-12-01 08:00,2015-12-28 16:00,,2015-02-11 08:00,2015-03-15 16:00,2015-02-11 08:00,2015-03-15 16:00,2015-02-11 08:00,2015-03-15 16:00,2015-12-01 08:00,2015-12-28 16:00,,PT_Normal,,,,,Im4XFowiaEeOmkNma4kxmA,8EgCUUqBx0eujEIJ/E7/lA,,,N,0,0,,,2014-04-05 12:27,2014-04-05 13:21,admin,admin,
1714,141457,1749,35924,642,0,N,N,N,CP_Drtn,TT_Task,DT_FixedDUR2,TK_NotStart,OFF-PRO-MEP-DR1060,Issue Purchase Order of Floor Drains & Outlets,,1792,0,96,0,0,0,96,12,0,12,,,,2015-04-05 08:00,2015-04-18 16:00,,2014-06-23 08:00,2014-07-10 14:00,2014-06-23 08:00,2014-07-10 14:00,2014-06-23 08:00,2014-07-10 14:00,2015-04-05 08:00,2015-04-18 16:00,,PT_Normal,,,,,yI784BW2WkmxZkDPfHBD8g,H7frGej0UUuYocLg2A0XtA,,,N,0,0,,,2014-04-05 12:27,2014-04-05 13:21,admin,admin,
1715,141458,1749,35924,1447,0,N,N,N,CP_Drtn,TT_Task,DT_FixedDUR2,TK_NotStart,OFF-PRO-MEP-DR1070,Manufacturing & Shipping of Floor Drains & Outlets,,2258,4,720,0,0,0,720,90,0,90,,,,2015-04-19 08:00,2015-07-17 16:00,,2014-07-10 14:00,2014-10-08 14:00,2014-07-10 14:00,2014-10-08 14:00,2014-07-10 14:00,2014-10-08 14:00,2015-04-19 08:00,2015-07-17 16:00,,PT_Normal,,,,,HQGvUS1zl0ivlZSzCEiQrw,QdmLsBTqlEiV/IkIdyLRlw,,,N,0,0,,,2014-04-05 12:27,2014-04-05 13:21,admin,admin,
1716,141459,1749,35924,642,0,N,N,N,CP_Drtn,TT_Task,DT_FixedDUR2,TK_NotStart,OFF-PRO-MEP-DR1080,Clearance & Delivery to Site of Floor Drains & Outlets,,1940,0,96,0,0,0,96,12,0,12,,,,2015-07-18 08:00,2015-07-29 16:00,,2014-10-09 10:00,2014-10-23 12:00,2014-10-09 10:00,2014-10-23 12:00,2014-10-09 10:00,2014-10-23 12:00,2015-07-18 08:00,2015-07-29 16:00,,PT_Normal,,,,,Ab4yoU6TlU26+BJMJxZlfQ,FkTCWNnS/Eyk34gA7D2KuQ,,,N,0,0,,,2014-04-05 12:27,2014-04-05 13:21,admin,admin,
1717,141460,1749,35935,642,0,N,N,N,CP_Drtn,TT_Task,DT_FixedDUR2,TK_NotStart,OFF-PRO-MEP-DR1030,Issue Purchase Order of Drainage Pipes & Fittings,,824,0,48,0,0,0,48,6,0,6,,,,2014-11-05 08:00,2014-11-11 16:00,,2014-06-15 08:00,2014-06-22 16:00,2014-06-15 08:00,2014-06-22 16:00,2014-06-15 08:00,2014-06-22 16:00,2014-11-05 08:00,2014-11-11 16:00,CS_ALAP,PT_Normal,,,,,5P2za6xHEU616ZfoAIKsSA,M7dCKpQPFU++1owZNkBn0Q,,,N,0,0,,,2014-04-05 12:27,2014-04-05 13:21,admin,admin,
1718,141461,1749,35935,1447,0,N,N,N,CP_Drtn,TT_Task,DT_FixedDUR2,TK_NotStart,OFF-PRO-MEP-DR1040,Manufacturing & Shipping of Drainage Pipes & Fittings,,1136,0,560,0,0,0,560,70,0,70,,,,2014-11-12 08:00,2015-01-20 16:00,,2014-06-23 08:00,2014-08-31 16:00,2014-06-23 08:00,2014-08-31 16:00,2014-06-23 08:00,2014-08-31 16:00,2014-11-12 08:00,2015-01-20 16:00,CS_ALAP,PT_Normal,,,,,GrEucS6GbEKR/eVUeQ7GTA,qVY6PX58CkKJdzKtmGXgXA,,,N,0,0,,,2014-04-05 12:27,2014-04-05 13:21,admin,admin,
1719,141462,1749,35935,642,0,N,N,N,CP_Drtn,TT_Task,DT_FixedDUR2,TK_NotStart,OFF-PRO-MEP-DR1050,Clearance & Delivery to Site of Drainage Pipes & Fittings,,904,0,96,0,0,0,96,12,0,12,,,,2015-01-21 08:00,2015-02-03 16:00,,2014-09-01 08:00,2014-09-14 16:00,2014-09-01 08:00,2014-09-14 16:00,2014-09-01 08:00,2014-09-14 16:00,2015-01-21 08:00,2015-02-03 16:00,CS_ALAP,PT_Normal,,,,,xLJ1UKSmXEKpj0CSH/ZoOA,ekQFNQ3n+0OXvd7PbxHbTw,,,N,0,0,,,2014-04-05 12:27,2014-04-05 13:21,admin,admin,
1720,141463,1749,35954,642,0,N,N,N,CP_Drtn,TT_Task,DT_FixedDUR2,TK_NotStart,OFF-PRO-MEP-WS1000,Issue Purchase Order of PPR Pipes & Fittings,,584,0,96,0,0,0,96,12,0,12,,,,2014-11-12 08:00,2014-11-25 16:00,,2014-08-11 08:00,2014-08-24 16:00,2014-08-11 08:00,2014-08-24 16:00,2014-08-11 08:00,2014-08-24 16:00,2014-11-12 08:00,2014-11-25 16:00,,PT_Normal,,,,,yTpFhF4nB0yi7oWDahavDA,fOWIby0vp0Wgi3+hDqEtYA,,,N,0,0,,,2014-04-05 12:27,2014-04-05 13:21,admin,admin,
1721,141464,1749,35954,1447,0,N,N,N,CP_Drtn,TT_Task,DT_FixedDUR2,TK_NotStart,OFF-PRO-MEP-WS1010,Manufacturing & Shipping of PPR Pipes & Fittings,,744,0,600,0,0,0,600,75,0,75,,,,2014-11-26 08:00,2015-02-08 16:00,,2014-08-25 08:00,2014-11-07 16:00,2014-08-25 08:00,2014-11-07 16:00,2014-08-25 08:00,2014-11-07 16:00,2014-11-26 08:00,2015-02-08 16:00,,PT_Normal,,,,,cNsvLU4j7U2FMATRKyK9hQ,53OsV5pUMEanGl3cxiEecw,,,N,0,0,,,2014-04-05 12:27,2014-04-05 13:21,admin,admin,
1722,141465,1749,35954,642,0,N,N,N,CP_Drtn,TT_Task,DT_FixedDUR2,TK_NotStart,OFF-PRO-MEP-WS1020,Clearance & Delivery to Site of PPR Pipes & Fittings,,624,0,96,0,0,0,96,12,0,12,,,,2015-02-09 08:00,2015-02-22 16:00,,2014-11-08 08:00,2014-11-20 16:00,2014-11-08 08:00,2014-11-20 16:00,2014-11-08 08:00,2014-11-20 16:00,2015-02-09 08:00,2015-02-22 16:00,,PT_Normal,,,,,VhzwCjT650q57svB7m1JBg,bfE/Dima80KSVk1Kd/6Tuw,,,N,0,0,,,2014-04-05 12:27,2014-04-05 13:21,admin,admin,
1723,141466,1749,36050,642,0,N,N,N,CP_Drtn,TT_Task,DT_FixedDUR2,TK_NotStart,OFF-PRO-MEP-WS1030,Issue Purchase Order of PEX Pipes & Fittings,,768,0,96,0,0,0,96,12,0,12,,,,2014-10-21 08:00,2014-11-06 16:00,,2014-06-11 08:00,2014-06-25 16:00,2014-06-11 08:00,2014-06-25 16:00,2014-06-11 08:00,2014-06-25 16:00,2014-10-21 08:00,2014-11-06 16:00,CS_ALAP,PT_Normal,,,,,vffeP4l6y0yLwVRI2UZIZg,2+T0wezaHkibKh8MQSl7yQ,,,N,0,0,,,2014-04-05 12:27,2014-04-05 13:21,admin,admin,
1724,141467,1749,36050,1447,0,N,N,N,CP_Drtn,TT_Task,DT_FixedDUR2,TK_NotStart,OFF-PRO-MEP-WS1040,Manufacturing & Shipping of PEX Pipes & Fittings,,1072,0,600,0,0,0,600,75,0,75,,,,2014-11-07 08:00,2015-01-20 16:00,,2014-06-26 08:00,2014-09-08 16:00,2014-06-26 08:00,2014-09-08 16:00,2014-06-26 08:00,2014-09-08 16:00,2014-11-07 08:00,2015-01-20 16:00,CS_ALAP,PT_Normal,,,,,fY/JoKk1cU6PJ8c2rI+F5w,23K0KH+ylEekV3jWtsMnbg,,,N,0,0,,,2014-04-05 12:27,2014-04-05 13:21,admin,admin,
1725,141468,1749,36050,642,0,N,N,N,CP_Drtn,TT_Task,DT_FixedDUR2,TK_NotStart,OFF-PRO-MEP-WS1050,Clearance & Delivery to Site of PEX Pipes & Fittings,,848,0,96,0,0,0,96,12,0,12,,,,2015-01-21 08:00,2015-02-03 16:00,,2014-09-09 08:00,2014-09-22 16:00,2014-09-09 08:00,2014-09-22 16:00,2014-09-09 08:00,2014-09-22 16:00,2015-01-21 08:00,2015-02-03 16:00,CS_ALAP,PT_Normal,,,,,JsxzR6cwak+5ETOq8ryMtQ,qt+at45GUE2mx+ncZYrblg,,,N,0,0,,,2014-04-05 12:27,2014-04-05 13:21,admin,admin,
1726,141469,1749,35982,642,0,N,N,N,CP_Drtn,TT_Task,DT_FixedDUR2,TK_NotStart,OFF-PRO-MEP-WS1090,Issue Purchase Order of WS Valves & Acc.,,856,0,96,0,0,0,96,12,0,12,,,,2014-11-17 08:00,2014-11-30 16:00,,2014-06-23 08:00,2014-07-10 14:00,2014-06-23 08:00,2014-07-10 14:00,2014-06-23 08:00,2014-07-10 14:00,2014-11-17 08:00,2014-11-30 16:00,,PT_Normal,,,,,JeuQREj2UEybbtFZD/naYg,Q5JHcoCcOUinegXYe80zUA,,,N,0,0,,,2014-04-05 12:27,2014-04-05 13:21,admin,admin,
1727,141470,1749,35982,1447,0,N,N,N,CP_Drtn,TT_Task,DT_FixedDUR2,TK_NotStart,OFF-PRO-MEP-WS1100,Manufacturing & Shipping of WS Valves & Acc.,,1146,0,560,0,0,0,560,70,0,70,,,,2014-12-01 08:00,2015-02-08 16:00,,2014-07-10 14:00,2014-09-18 14:00,2014-07-10 14:00,2014-09-18 14:00,2014-07-10 14:00,2014-09-18 14:00,2014-12-01 08:00,2015-02-08 16:00,,PT_Normal,,,,,PQ+L9hayS0yV8HvYKAHraw,kP6ZsE1fCE+U0n8xWHZS9w,,,N,0,0,,,2014-04-05 12:27,2014-04-05 13:21,admin,admin,
1728,141471,1749,35982,642,0,N,N,N,CP_Drtn,TT_Task,DT_FixedDUR2,TK_NotStart,OFF-PRO-MEP-WS1110,Clearance & Delivery to Site of WS Valves & Acc.,,906,282,96,0,0,0,96,12,0,12,,,,2015-02-09 08:00,2015-02-22 16:00,,2014-09-18 14:00,2014-10-02 14:00,2014-09-18 14:00,2014-10-02 14:00,2014-09-18 14:00,2014-10-02 14:00,2015-02-09 08:00,2015-02-22 16:00,,PT_Normal,,,,,ePb8wOxQ2EC1/UpUi2iVSA,bZUAfb8r8U2/UfHGgzdjEw,,,N,0,0,,,2014-04-05 12:27,2014-04-05 13:21,admin,admin,
1729,141472,1749,35917,642,0,N,N,N,CP_Drtn,TT_Task,DT_FixedDUR2,TK_NotStart,OFF-PRO-MEP-WS1120,Issue Purchase Order of Sanitary FIxtures,,1076,0,96,0,0,0,96,12,0,12,,,,2015-03-01 12:00,2015-03-15 12:00,,2014-09-15 08:00,2014-09-28 16:00,2014-09-15 08:00,2014-09-28 16:00,2014-09-15 08:00,2014-09-28 16:00,2015-03-01 12:00,2015-03-15 12:00,,PT_Normal,,,,,MfqXdVLp5Uaj9cSGuafecQ,RmKRxv/yy06WuM4ImMfWpw,,,N,0,0,,,2014-04-05 12:27,2014-04-05 13:21,admin,admin,
1730,141473,1749,35917,1447,0,N,N,N,CP_Drtn,TT_Task,DT_FixedDUR2,TK_NotStart,OFF-PRO-MEP-WS1130,Manufacturing & Shipping of Sanitary FIxtures,,1340,0,960,0,0,0,960,120,0,120,,,,2015-03-15 12:00,2015-07-13 12:00,,2014-09-29 08:00,2015-01-26 16:00,2014-09-29 08:00,2015-01-26 16:00,2014-09-29 08:00,2015-01-26 16:00,2015-03-15 12:00,2015-07-13 12:00,,PT_Normal,,,,,iJ9I//JqmkSjFr+F0D4bgA,jAifKeyGRUm0w/+H0WNuqA,,,N,0,0,,,2014-04-05 12:27,2014-04-05 13:21,admin,admin,
1731,141474,1749,35917,642,0,N,N,N,CP_Drtn,TT_Task,DT_FixedDUR2,TK_NotStart,OFF-PRO-MEP-WS1140,Clearance & Delivery to Site of Sanitary FIxtures,,1196,136,96,0,0,0,96,12,0,12,,,,2015-07-13 12:00,2015-07-25 12:00,,2015-01-27 08:00,2015-02-09 16:00,2015-01-27 08:00,2015-02-09 16:00,2015-01-27 08:00,2015-02-09 16:00,2015-07-13 12:00,2015-07-25 12:00,,PT_Normal,,,,,K6hLpQLmGEGcIpQ7QSKY/g,ev31t1ijmU2bxw7r+GbtsA,,,N,0,0,,,2014-04-05 12:27,2014-04-05 13:21,admin,admin,
1732,141475,1749,35925,642,0,N,N,N,CP_Drtn,TT_Task,DT_FixedDUR2,TK_NotStart,OFF-PRO-MEP-WS1150,Preparation & Submission of Demostic Water Booster Pump,,712,0,480,0,0,0,480,60,0,60,,,,2014-10-23 08:00,2015-01-06 16:00,,2014-06-23 08:00,2014-09-14 16:00,2014-06-23 08:00,2014-09-14 16:00,2014-06-23 08:00,2014-09-14 16:00,2014-10-23 08:00,2015-01-06 16:00,,PT_Normal,,,,,weJJnq5LQ0mBn+0z8t1k2w,/YmaFPFtNUaHYeRr/svfRw,,,N,0,0,,,2014-04-05 12:27,2014-04-05 13:21,admin,admin,
1733,141476,1749,35925,642,0,N,N,N,CP_Drtn,TT_Task,DT_FixedDUR2,TK_NotStart,OFF-PRO-MEP-WS1160,Review & Approval of Demostic Water Booster Pump,,1480,0,96,0,0,0,96,12,0,12,,,,2015-04-29 08:00,2015-05-12 16:00,,2014-09-15 08:00,2014-09-28 16:00,2014-09-15 08:00,2014-09-28 16:00,2014-09-15 08:00,2014-09-28 16:00,2015-04-29 08:00,2015-05-12 16:00,,PT_Normal,,,,,MAfUnpdfF0+qBT63WSpIQg,++opOYM34kyqWDUL/M/KFQ,,,N,0,0,,,2014-04-05 12:27,2014-04-05 13:21,admin,admin,
1734,141477,1749,35925,642,0,N,N,N,CP_Drtn,TT_Task,DT_FixedDUR2,TK_NotStart,OFF-PRO-MEP-WS1170,Issue Purchase Order of Demostic Water Booster Pump,,1480,0,720,0,0,0,720,90,0,90,,,,2015-06-15 08:00,2015-09-12 16:00,,2014-11-11 08:00,2015-02-25 16:00,2014-11-11 08:00,2015-02-25 16:00,2014-11-11 08:00,2015-02-25 16:00,2015-06-15 08:00,2015-09-12 16:00,,PT_Normal,,,,,wt4x3qp6lkWoKLlNI/JUhw,imQiunv760Ok44GTTE11/w,,,N,0,0,,,2014-04-05 12:27,2014-04-05 13:21,admin,admin,
1735,141478,1749,35925,1447,0,N,N,N,CP_Drtn,TT_Task,DT_FixedDUR2,TK_NotStart,OFF-PRO-MEP-WS1180,Manufacturing & Shipping of Demostic Water Booster Pump,,1592,0,576,0,0,0,576,72,0,72,,,,2015-09-13 08:00,2015-11-23 16:00,,2015-02-26 08:00,2015-05-08 16:00,2015-02-26 08:00,2015-05-08 16:00,2015-02-26 08:00,2015-05-08 16:00,2015-09-13 08:00,2015-11-23 16:00,,PT_Normal,,,,,fe4nHsK9cUiF/RRrm69KQw,MO8fYg+rAEGTl4RqR+IINg,,,N,0,0,,,2014-04-05 12:27,2014-04-05 13:21,admin,admin,
1736,141479,1749,35925,642,0,N,N,N,CP_Drtn,TT_Task,DT_FixedDUR2,TK_NotStart,OFF-PRO-MEP-WS1190,Clearance & Delivery to Site of Demostic Water Booster Pump,,1568,0,224,0,0,0,224,28,0,28,,,,2015-11-24 08:00,2015-12-21 16:00,,2015-05-09 08:00,2015-06-08 16:00,2015-05-09 08:00,2015-06-08 16:00,2015-05-09 08:00,2015-06-08 16:00,2015-11-24 08:00,2015-12-21 16:00,,PT_Normal,,,,,qNfFGJ3Ul0W7vPf+gSynzA,62ShcUzuu0mRXY4K0EFUqQ,,,N,0,0,,,2014-04-05 12:27,2014-04-05 13:21,admin,admin,
1737,141480,1749,35952,642,0,N,N,N,CP_Drtn,TT_Task,DT_FixedDUR2,TK_NotStart,OFF-PRO-MEP-FF1050,"Issue Purchase Order of ERW BS Pipes ,MS and MI Fittings",,920,0,96,0,0,0,96,12,0,12,,,,2014-12-31 08:00,2015-01-15 16:00,,2014-08-11 08:00,2014-08-24 16:00,2014-08-11 08:00,2014-08-24 16:00,2014-08-11 08:00,2014-08-24 16:00,2014-12-31 08:00,2015-01-15 16:00,,PT_Normal,,,,,i+eqhV8zs0SCQAqWbe57wg,cLuFJPXhkU2ErEmOJ1AO2w,,,N,0,0,,,2014-04-05 12:27,2014-04-05 13:21,admin,admin,
1738,141481,1749,35952,1447,0,N,N,N,CP_Drtn,TT_Task,DT_FixedDUR2,TK_NotStart,OFF-PRO-MEP-FF1060,"Manufacturing & Shipping of ERW BS Pipes ,MS and MI Fittings",,1152,0,600,0,0,0,600,75,0,75,,,,2015-01-16 08:00,2015-03-31 16:00,,2014-08-25 08:00,2014-11-07 16:00,2014-08-25 08:00,2014-11-07 16:00,2014-08-25 08:00,2014-11-07 16:00,2015-01-16 08:00,2015-03-31 16:00,,PT_Normal,,,,,DGWMxu/qRUar+uH8krpkrA,bIe8fSNBA02XvNIsLQrVwA,,,N,0,0,,,2014-04-05 12:27,2014-04-05 13:21,admin,admin,
1739,141482,1749,35952,642,0,N,N,N,CP_Drtn,TT_Task,DT_FixedDUR2,TK_NotStart,OFF-PRO-MEP-FF1070,"Clearance & Delivery to Site of ERW BS Pipes ,MS and MI Fittings",,976,0,224,0,0,0,224,28,0,28,,,,2015-04-01 08:00,2015-05-03 16:00,,2014-11-08 08:00,2014-12-09 16:00,2014-11-08 08:00,2014-12-09 16:00,2014-11-08 08:00,2014-12-09 16:00,2015-04-01 08:00,2015-05-03 16:00,,PT_Normal,,,,,CYOJCj7PiEORefN0BbzACQ,P23BKbtFV0eafG0abbayLw,,,N,0,0,,,2014-04-05 12:27,2014-04-05 13:21,admin,admin,
1740,141483,1749,35944,642,0,N,N,N,CP_Drtn,TT_Task,DT_FixedDUR2,TK_NotStart,OFF-PRO-MEP-FF1000,Preparation & Submission of  Fire Pumps / Sprinkler System,,2440,0,360,0,0,0,360,45,0,45,,,,2015-02-18 08:00,2015-04-11 16:00,,2014-02-01 08:00,2014-03-24 16:00,2014-02-01 08:00,2014-03-24 16:00,2014-02-01 08:00,2014-03-24 16:00,2015-02-18 08:00,2015-04-11 16:00,,PT_Normal,,,,,+6OFBQ9ryEGEQCRZTzz59w,FHMwfKsodEKbRfaKgd2CsQ,,,N,0,0,,,2014-04-05 12:27,2014-04-05 13:21,admin,admin,
1741,141484,1749,35944,642,0,N,N,N,CP_Drtn,TT_Task,DT_FixedDUR2,TK_NotStart,OFF-PRO-MEP-FF1010,Review & Approval of Fire Pumps / Sprinkler System,,2440,0,96,0,0,0,96,12,0,12,,,,2015-04-12 08:00,2015-04-25 16:00,,2014-03-25 08:00,2014-04-07 16:00,2014-03-25 08:00,2014-04-07 16:00,2014-03-25 08:00,2014-04-07 16:00,2015-04-12 08:00,2015-04-25 16:00,,PT_Normal,,,,,KGXNY1UCjk6+ONwprvu7VA,RGoQoJLIlESaNcjbFnLOfw,,,N,0,0,,,2014-04-05 12:27,2014-04-05 13:21,admin,admin,
1742,141485,1749,35944,642,0,N,N,N,CP_Drtn,TT_Task,DT_FixedDUR2,TK_NotStart,OFF-PRO-MEP-FF1020,Issue Purchase Order of Fire Pumps / Sprinkler System,,2440,0,96,0,0,0,96,12,0,12,,,,2015-08-29 08:00,2015-09-09 16:00,,2014-09-11 08:00,2014-09-24 16:00,2014-09-11 08:00,2014-09-24 16:00,2014-09-11 08:00,2014-09-24 16:00,2015-08-29 08:00,2015-09-09 16:00,,PT_Normal,,,,,tqVOZzAOZki3srM7xVjegQ,dAqQOX55ik2uq7KIq3PWLQ,,,N,0,0,,,2014-04-05 12:27,2014-04-05 13:21,admin,admin,
1743,141486,1749,35944,1447,0,N,N,N,CP_Drtn,TT_Task,DT_FixedDUR2,TK_NotStart,OFF-PRO-MEP-FF1030,Manufacturing & Shipping of Fire Pumps / Sprinkler System,,2800,0,600,0,0,0,600,75,0,75,,,,2015-09-10 08:00,2015-11-23 16:00,,2014-09-25 08:00,2014-12-08 16:00,2014-09-25 08:00,2014-12-08 16:00,2014-09-25 08:00,2014-12-08 16:00,2015-09-10 08:00,2015-11-23 16:00,,PT_Normal,,,,,c7+9SzTkxEip/u1GFlulVg,F0sZygm93UShnwpJWQfhQA,,,N,0,0,,,2014-04-05 12:27,2014-04-05 13:21,admin,admin,
1744,141487,1749,35944,642,0,N,N,N,CP_Drtn,TT_Task,DT_FixedDUR2,TK_NotStart,OFF-PRO-MEP-FF1040,Clearance & Delivery to Site of Fire Pumps / Sprinkler System,,2584,0,224,0,0,0,224,28,0,28,,,,2015-11-24 08:00,2015-12-21 16:00,,2014-12-09 08:00,2015-01-12 16:00,2014-12-09 08:00,2015-01-12 16:00,2014-12-09 08:00,2015-01-12 16:00,2015-11-24 08:00,2015-12-21 16:00,,PT_Normal,,,,,wfz3lUJAeEOsrw+VbFLY1w,mMU50t7GykmeWFH6q9B2wA,,,N,0,0,,,2014-04-05 12:27,2014-04-05 13:21,admin,admin,
1745,141488,1749,36044,642,0,N,N,N,CP_Drtn,TT_Task,DT_FixedDUR2,TK_NotStart,OFF-PRO-MEP-AC1030,Issue Purchase Order of Duct Insulation,,944,0,96,0,0,0,96,12,0,12,,,,2015-01-06 08:00,2015-01-19 16:00,,2014-08-11 08:00,2014-08-24 16:00,2014-08-11 08:00,2014-08-24 16:00,2014-08-11 08:00,2014-08-24 16:00,2015-01-06 08:00,2015-01-19 16:00,,PT_Normal,,,,,2zbW128110COfsnZdnIJ9w,yO6B69sqkEiP7QjJh3qFFw,,,N,0,0,,,2014-04-05 12:27,2014-04-05 13:21,admin,admin,
1746,141489,1749,36044,1447,0,N,N,N,CP_Drtn,TT_Task,DT_FixedDUR2,TK_NotStart,OFF-PRO-MEP-AC1040,Manufacturing & Shipping of Duct Insulation,,1184,16,480,0,0,0,480,60,0,60,,,,2015-01-20 08:00,2015-03-20 16:00,,2014-08-25 08:00,2014-10-23 16:00,2014-08-25 08:00,2014-10-23 16:00,2014-08-25 08:00,2014-10-23 16:00,2015-01-20 08:00,2015-03-20 16:00,,PT_Normal,,,,,4X4xX18EWU+YljiaxtUUtg,grB3/8rAwk+Dej22qaab/w,,,N,0,0,,,2014-04-05 12:27,2014-04-05 13:21,admin,admin,
1747,141490,1749,36044,642,0,N,N,N,CP_Drtn,TT_Task,DT_FixedDUR2,TK_NotStart,OFF-PRO-MEP-AC1050,Clearance & Delivery to Site of Duct Insulation,,968,512,96,0,0,0,96,12,0,12,,,,2015-03-21 08:00,2015-04-02 16:00,,2014-10-26 08:00,2014-11-10 16:00,2014-10-26 08:00,2014-11-10 16:00,2014-10-26 08:00,2014-11-10 16:00,2015-03-21 08:00,2015-04-02 16:00,,PT_Normal,,,,,k/j3QW3yz0uqWqBG9rxS5w,3VsQQgxAq0efJx0vSdS8hg,,,N,0,0,,,2014-04-05 12:27,2014-04-05 13:21,admin,admin,
1748,141491,1749,36040,642,0,N,N,N,CP_Drtn,TT_Task,DT_FixedDUR2,TK_NotStart,OFF-PRO-MEP-AC1280,Preparation & Submission of Fan Coil Unit's (FCU's),,848,0,480,0,0,0,480,60,0,60,,,,2014-11-16 08:00,2015-01-26 16:00,,2014-06-23 08:00,2014-09-14 16:00,2014-06-23 08:00,2014-09-14 16:00,2014-06-23 08:00,2014-09-14 16:00,2014-11-16 08:00,2015-01-26 16:00,,PT_Normal,,,,,2hp8FNpPEEaUa6kCYUl5wQ,ALXKQKyM3027441xpMlr5Q,,,N,0,0,,,2014-04-05 12:27,2014-04-05 13:21,admin,admin,
1749,141492,1749,36040,642,0,N,N,N,CP_Drtn,TT_Task,DT_FixedDUR2,TK_NotStart,OFF-PRO-MEP-AC1290,Review & Approval of Fan Coil Unit's (FCU's),,848,0,96,0,0,0,96,12,0,12,,,,2015-01-27 08:00,2015-02-09 16:00,,2014-09-15 08:00,2014-09-28 16:00,2014-09-15 08:00,2014-09-28 16:00,2014-09-15 08:00,2014-09-28 16:00,2015-01-27 08:00,2015-02-09 16:00,,PT_Normal,,,,,AmnC8l0Z0EO++UmerfKs7A,FGGPDXT6kEawjf90qn8NQA,,,N,0,0,,,2014-04-05 12:27,2014-04-05 13:21,admin,admin,
1750,141493,1749,36040,642,0,N,N,N,CP_Drtn,TT_Task,DT_FixedDUR2,TK_NotStart,OFF-PRO-MEP-AC1300,Issue Purchase Order of Fan Coil Unit's (FCU's),,848,0,96,0,0,0,96,12,0,12,,,,2015-02-10 08:00,2015-02-23 16:00,,2014-09-29 08:00,2014-10-16 16:00,2014-09-29 08:00,2014-10-16 16:00,2014-09-29 08:00,2014-10-16 16:00,2015-02-10 08:00,2015-02-23 16:00,,PT_Normal,,,,,r4GpE4t3D0WWEtTER1Bdzw,pzTg6m/cUEuE7954JvoOjw,,,N,0,0,,,2014-04-05 12:27,2014-04-05 13:21,admin,admin,
1751,141494,1749,36040,1447,0,N,N,N,CP_Drtn,TT_Task,DT_FixedDUR2,TK_NotStart,OFF-PRO-MEP-AC1310,Manufacturing & Shipping of Fan Coil Unit's (FCU's),,1040,0,720,0,0,0,720,90,0,90,,,,2015-02-24 08:00,2015-05-24 16:00,,2014-10-17 08:00,2015-01-14 16:00,2014-10-17 08:00,2015-01-14 16:00,2014-10-17 08:00,2015-01-14 16:00,2015-02-24 08:00,2015-05-24 16:00,,PT_Normal,,,,,K3W+PWniK0mmf0PbjM0Acw,zPukbwGYCE6yjyPnpmEt/A,,,N,0,0,,,2014-04-05 12:27,2014-04-05 13:21,admin,admin,
1752,141495,1749,36040,642,0,N,N,N,CP_Drtn,TT_Task,DT_FixedDUR2,TK_NotStart,OFF-PRO-MEP-AC1320,Clearance & Delivery to Site of Fan Coil Unit's (FCU's),,888,0,224,0,0,0,224,28,0,28,,,,2015-05-25 08:00,2015-06-22 16:00,,2015-01-15 08:00,2015-02-16 16:00,2015-01-15 08:00,2015-02-16 16:00,2015-01-15 08:00,2015-02-16 16:00,2015-05-25 08:00,2015-06-22 16:00,,PT_Normal,,,,,aWpnh8oCE06eALsnnsY8OQ,H/1HA0dkd0WGKZ/+sgyIkw,,,N,0,0,,,2014-04-05 12:27,2014-04-05 13:21,admin,admin,
1753,141496,1749,35948,642,0,N,N,N,CP_Drtn,TT_Task,DT_FixedDUR2,TK_NotStart,OFF-PRO-MEP-AC1430,Preparation & Submission of Extract  Fans,,1000,0,240,0,0,0,240,30,0,30,,,,2014-12-08 08:00,2015-01-13 16:00,,2014-06-23 08:00,2014-08-10 16:00,2014-06-23 08:00,2014-08-10 16:00,2014-06-23 08:00,2014-08-10 16:00,2014-12-08 08:00,2015-01-13 16:00,,PT_Normal,,,,,Ks/fHNSO3EOMokcdVU4Aiw,EBWVPggfJEiDQS5n3/YFIA,,,N,0,0,,,2014-04-05 12:27,2014-04-05 13:21,admin,admin,
1754,141497,1749,35948,642,0,N,N,N,CP_Drtn,TT_Task,DT_FixedDUR2,TK_NotStart,OFF-PRO-MEP-AC1440,Review & Approval of Extract  Fans,,2528,0,96,0,0,0,96,12,0,12,,,,2015-08-13 08:00,2015-08-24 16:00,,2014-08-11 08:00,2014-08-24 16:00,2014-08-11 08:00,2014-08-24 16:00,2014-08-11 08:00,2014-08-24 16:00,2015-08-13 08:00,2015-08-24 16:00,,PT_Normal,,,,,zXuoSGaVSke7J0yPhKWUDw,wzfFzbspSUOveq3sCIduCw,,,N,0,0,,,2014-04-05 12:27,2014-04-05 13:21,admin,admin,
1755,141498,1749,35948,642,0,N,N,N,CP_Drtn,TT_Task,DT_FixedDUR2,TK_NotStart,OFF-PRO-MEP-AC1450,Issue Purchase Order of Extract  Fans,,2528,0,96,0,0,0,96,12,0,12,,,,2015-08-25 08:00,2015-09-05 16:00,,2014-08-25 08:00,2014-09-07 16:00,2014-08-25 08:00,2014-09-07 16:00,2014-08-25 08:00,2014-09-07 16:00,2015-08-25 08:00,2015-09-05 16:00,,PT_Normal,,,,,1dMn0fCVZEuu1SNi2Z5lyQ,HrgkZWdX7UqlGbuNuik0Qw,,,N,0,0,,,2014-04-05 12:27,2014-04-05 13:21,admin,admin,
1756,141499,1749,35948,1447,0,N,N,N,CP_Drtn,TT_Task,DT_FixedDUR2,TK_NotStart,OFF-PRO-MEP-AC1460,Manufacturing & Shipping of Extract  Fans,,2904,0,576,0,0,0,576,72,0,72,,,,2015-09-06 08:00,2015-11-16 16:00,,2014-09-08 08:00,2014-11-18 16:00,2014-09-08 08:00,2014-11-18 16:00,2014-09-08 08:00,2014-11-18 16:00,2015-09-06 08:00,2015-11-16 16:00,,PT_Normal,,,,,pXElLPe6lk6GpICgmTtmBw,49fIoarpAU+iueiMMF/M7w,,,N,0,0,,,2014-04-05 12:27,2014-04-05 13:21,admin,admin,
1757,141500,1749,35948,642,0,N,N,N,CP_Drtn,TT_Task,DT_FixedDUR2,TK_NotStart,OFF-PRO-MEP-AC1470,Clearance & Delivery to Site of Extract  Fans,,2664,0,224,0,0,0,224,28,0,28,,,,2015-11-17 08:00,2015-12-14 16:00,,2014-11-19 08:00,2014-12-21 16:00,2014-11-19 08:00,2014-12-21 16:00,2014-11-19 08:00,2014-12-21 16:00,2015-11-17 08:00,2015-12-14 16:00,,PT_Normal,,,,,U1sKBV0hrUG2eIhgI6AIGA,EWNSXUHmckCphjUoQcFl6A,,,N,0,0,,,2014-04-05 12:27,2014-04-05 13:21,admin,admin,
1758,141501,1749,35962,642,0,N,N,N,CP_Drtn,TT_Task,DT_FixedDUR2,TK_NotStart,OFF-PRO-MEP-AC1150,Issue Purchase Order of Chilled Water Pipes and Fittings,,960,0,96,0,0,0,96,12,0,12,,,,2014-12-02 08:00,2014-12-15 16:00,,2014-06-23 08:00,2014-07-10 14:00,2014-06-23 08:00,2014-07-10 14:00,2014-06-23 08:00,2014-07-10 14:00,2014-12-02 08:00,2014-12-15 16:00,,PT_Normal,,,,,TcVwf9x55Em82XYRlzx3pw,zlp1SsMmr0S1TUG3ZqaF5A,,,N,0,0,,,2014-04-05 12:27,2014-04-05 13:21,admin,admin,
1759,141502,1749,35962,1447,0,N,N,N,CP_Drtn,TT_Task,DT_FixedDUR2,TK_NotStart,OFF-PRO-MEP-AC1160,Manufacturing & Shipping of Chilled Water Pipes and Fittings,,1266,0,600,0,0,0,600,75,0,75,,,,2014-12-16 08:00,2015-02-28 16:00,,2014-07-10 14:00,2014-09-23 14:00,2014-07-10 14:00,2014-09-23 14:00,2014-07-10 14:00,2014-09-23 14:00,2014-12-16 08:00,2015-02-28 16:00,,PT_Normal,,,,,TW+2L2WB9kKwbkrEw4Co3w,+a9dCN1/i0mVidddLigwdQ,,,N,0,0,,,2014-04-05 12:27,2014-04-05 13:21,admin,admin,
1760,141503,1749,35962,642,0,N,N,N,CP_Drtn,TT_Task,DT_FixedDUR2,TK_NotStart,OFF-PRO-MEP-AC1170,Clearance & Delivery to Site of Chilled Water Pipes and Fittings,,1010,450,224,0,0,0,224,28,0,28,,,,2015-03-01 08:00,2015-04-01 16:00,,2014-09-23 14:00,2014-11-02 14:00,2014-09-23 14:00,2014-11-02 14:00,2014-09-23 14:00,2014-11-02 14:00,2015-03-01 08:00,2015-04-01 16:00,,PT_Normal,,,,,OxESjXI60ky7deCtTVaY9g,1hIqp1lkfkGu/llA0vVTLg,,,N,0,0,,,2014-04-05 12:27,2014-04-05 13:21,admin,admin,
1761,141504,1749,35941,642,0,N,N,N,CP_Drtn,TT_Task,DT_FixedDUR2,TK_NotStart,OFF-PRO-MEP-AC1380,Preparation & Submission of Chemical Treatment / Dosing Pot Unit,,1448,0,240,0,0,0,240,30,0,30,,,,2015-08-08 08:00,2015-09-06 16:00,,2015-01-20 08:00,2015-02-23 16:00,2015-01-20 08:00,2015-02-23 16:00,2015-01-20 08:00,2015-02-23 16:00,2015-08-08 08:00,2015-09-06 16:00,,PT_Normal,,,,,dg4iL242/USAGczWX295KA,vdcJInEtqkO5g5BJcmZRyA,,,N,0,0,,,2014-04-05 12:27,2014-04-05 13:21,admin,admin,
1762,141505,1749,35941,642,0,N,N,N,CP_Drtn,TT_Task,DT_FixedDUR2,TK_NotStart,OFF-PRO-MEP-AC1390,Review & Approval of Chemical Treatment / Dosing Pot Unit,,1448,0,96,0,0,0,96,12,0,12,,,,2015-09-07 08:00,2015-09-18 16:00,,2015-02-24 08:00,2015-03-09 16:00,2015-02-24 08:00,2015-03-09 16:00,2015-02-24 08:00,2015-03-09 16:00,2015-09-07 08:00,2015-09-18 16:00,,PT_Normal,,,,,xp9z6M+NsE6eRF6WDxthKw,JTghs6FzBU2aAcc706TnIQ,,,N,0,0,,,2014-04-05 12:27,2014-04-05 13:21,admin,admin,
1763,141506,1749,35941,642,0,N,N,N,CP_Drtn,TT_Task,DT_FixedDUR2,TK_NotStart,OFF-PRO-MEP-AC1400,Issue Purchase Order of Chemical Treatment / Dosing Pot Unit,,1448,0,96,0,0,0,96,12,0,12,,,,2015-09-19 08:00,2015-09-30 16:00,,2015-03-10 08:00,2015-03-23 16:00,2015-03-10 08:00,2015-03-23 16:00,2015-03-10 08:00,2015-03-23 16:00,2015-09-19 08:00,2015-09-30 16:00,,PT_Normal,,,,,UfJwzILTy0yc5y1yCkBxmQ,xuL8bYLLhk+96A8ajriVAQ,,,N,0,0,,,2014-04-05 12:27,2014-04-05 13:21,admin,admin,
1764,141507,1749,35941,1447,0,N,N,N,CP_Drtn,TT_Task,DT_FixedDUR2,TK_NotStart,OFF-PRO-MEP-AC1410,Manufacturing & Shipping of Chemical Treatment / Dosing Pot Unit,,1528,0,576,0,0,0,576,72,0,72,,,,2015-10-01 08:00,2015-12-11 16:00,,2015-03-24 08:00,2015-06-03 16:00,2015-03-24 08:00,2015-06-03 16:00,2015-03-24 08:00,2015-06-03 16:00,2015-10-01 08:00,2015-12-11 16:00,,PT_Normal,,,,,O15yByBGU0KwDIP8z0o1kw,uRwg5RONeEa+Ty5W/NKJ5Q,,,N,0,0,,,2014-04-05 12:27,2014-04-05 13:21,admin,admin,
1765,141508,1749,35941,642,0,N,N,N,CP_Drtn,TT_Task,DT_FixedDUR2,TK_NotStart,OFF-PRO-MEP-AC1420,Clearance & Delivery to Site of Chemical Treatment / Dosing Pot Unit,,1528,320,224,0,0,0,224,28,0,28,,,,2015-12-12 08:00,2016-01-08 16:00,,2015-06-04 08:00,2015-07-01 16:00,2015-06-04 08:00,2015-07-01 16:00,2015-06-04 08:00,2015-07-01 16:00,2015-12-12 08:00,2016-01-08 16:00,,PT_Normal,,,,,Sop3UWX1MEeCyCp0runoGw,hSerm5mD2EKYeFREHj3A/A,,,N,0,0,,,2014-04-05 12:27,2014-04-05 13:21,admin,admin,
1766,141509,1749,35939,642,0,N,N,N,CP_Drtn,TT_Task,DT_FixedDUR2,TK_NotStart,OFF-PRO-MEP-AC1120,Issue Purchase Order of Grills & Diffusers,,692,0,96,0,0,0,96,12,0,12,,,,2015-04-30 12:00,2015-05-14 12:00,,2015-01-20 08:00,2015-02-02 16:00,2015-01-20 08:00,2015-02-02 16:00,2015-01-20 08:00,2015-02-02 16:00,2015-04-30 12:00,2015-05-14 12:00,,PT_Normal,,,,,Eq0bS8C9RUWhsopIWiEw3w,XjnxFBhi1k2O4xEsuSvdnw,,,N,0,0,,,2014-04-05 12:27,2014-04-05 13:21,admin,admin,
1767,141510,1749,35939,1447,0,N,N,N,CP_Drtn,TT_Task,DT_FixedDUR2,TK_NotStart,OFF-PRO-MEP-AC1130,Manufacturing & Shipping of Grills & Diffusers,,804,0,576,0,0,0,576,72,0,72,,,,2015-05-14 12:00,2015-07-25 12:00,,2015-02-03 08:00,2015-04-15 16:00,2015-02-03 08:00,2015-04-15 16:00,2015-02-03 08:00,2015-04-15 16:00,2015-05-14 12:00,2015-07-25 12:00,,PT_Normal,,,,,jXYNHGAfiEmGJnazOVCfcQ,rQnvQdWW+0OSIbgM2v5Jog,,,N,0,0,,,2014-04-05 12:27,2014-04-05 13:21,admin,admin,
1768,141511,1749,35939,642,0,N,N,N,CP_Drtn,TT_Task,DT_FixedDUR2,TK_NotStart,OFF-PRO-MEP-AC1140,Clearance & Delivery to Site of Grills & Diffusers,,748,0,96,0,0,0,96,12,0,12,,,,2015-07-25 12:00,2015-08-06 12:00,,2015-04-16 08:00,2015-04-29 16:00,2015-04-16 08:00,2015-04-29 16:00,2015-04-16 08:00,2015-04-29 16:00,2015-07-25 12:00,2015-08-06 12:00,,PT_Normal,,,,,/WFo+1/7TECbAPPFTMPdFg,Hkq6kKPjl0iAwOINEHGyqw,,,N,0,0,,,2014-04-05 12:27,2014-04-05 13:21,admin,admin,
1769,141512,1749,35943,642,0,N,N,N,CP_Drtn,TT_Task,DT_FixedDUR2,TK_NotStart,OFF-PRO-MEP-AC1090,Issue Purchase Order of Flexible Duct Connector,,744,0,96,0,0,0,96,12,0,12,,,,2015-02-28 08:00,2015-03-12 16:00,,2014-11-09 08:00,2014-11-22 16:00,2014-11-09 08:00,2014-11-22 16:00,2014-11-09 08:00,2014-11-22 16:00,2015-02-28 08:00,2015-03-12 16:00,,PT_Normal,,,,,oWB3Z3XYP0mdqyaewKoXdg,mzcM6MT9uEWSAgQ61pYumg,,,N,0,0,,,2014-04-05 12:27,2014-04-05 13:21,admin,admin,
1770,141513,1749,35943,642,0,N,N,N,CP_Drtn,TT_Task,DT_FixedDUR2,TK_NotStart,OFF-PRO-MEP-AC1110,Clearance & Delivery to Site of Flexible Duct Connector,,752,0,96,0,0,0,96,12,0,12,,,,2015-05-12 08:00,2015-05-25 16:00,,2015-01-22 08:00,2015-02-04 16:00,2015-01-22 08:00,2015-02-04 16:00,2015-01-22 08:00,2015-02-04 16:00,2015-05-12 08:00,2015-05-25 16:00,,PT_Normal,,,,,ewRYyFx/PUOs6wKUSwQfFg,0IJ81PQ2ZECZbJlntQrOhg,,,N,0,0,,,2014-04-05 12:27,2014-04-05 13:21,admin,admin,
1771,141514,1749,35943,1447,0,N,N,N,CP_Drtn,TT_Task,DT_FixedDUR2,TK_NotStart,OFF-PRO-MEP-AC1100,Manufacturing & Shipping of Flexible Duct Connector,,880,0,480,0,0,0,480,60,0,60,,,,2015-03-13 08:00,2015-05-11 16:00,,2014-11-23 08:00,2015-01-21 16:00,2014-11-23 08:00,2015-01-21 16:00,2014-11-23 08:00,2015-01-21 16:00,2015-03-13 08:00,2015-05-11 16:00,,PT_Normal,,,,,k1mRkdmITkGKpQKeCCX/Aw,ASzocbIzjEu2fmtUO3JxCQ,,,N,0,0,,,2014-04-05 12:27,2014-04-05 13:21,admin,admin,
1772,141515,1749,35922,642,0,N,N,N,CP_Drtn,TT_Task,DT_FixedDUR2,TK_NotStart,OFF-PRO-MEP-AC1330,Preparation & Submission of Chilled Water Pumps,,1952,0,240,0,0,0,240,30,0,30,,,,2015-04-28 08:00,2015-06-01 16:00,,2014-06-23 08:00,2014-08-10 16:00,2014-06-23 08:00,2014-08-10 16:00,2014-06-23 08:00,2014-08-10 16:00,2015-04-28 08:00,2015-06-01 16:00,,PT_Normal,,,,,RA1nyqbT+ke6OD1SkZcnYA,AQe2Kj5glUW3PH9I6OZ3yw,,,N,0,0,,,2014-04-05 12:27,2014-04-05 13:21,admin,admin,
1773,141516,1749,35922,642,0,N,N,N,CP_Drtn,TT_Task,DT_FixedDUR2,TK_NotStart,OFF-PRO-MEP-AC1340,Review & Approval of Chilled Water Pumps,,1952,0,96,0,0,0,96,12,0,12,,,,2015-06-02 08:00,2015-06-13 16:00,,2014-08-11 08:00,2014-08-24 16:00,2014-08-11 08:00,2014-08-24 16:00,2014-08-11 08:00,2014-08-24 16:00,2015-06-02 08:00,2015-06-13 16:00,,PT_Normal,,,,,PptTwDJqpE6cdGwLa9iuiA,WP7pNt23+0Wzg7h09HH8uQ,,,N,0,0,,,2014-04-05 12:27,2014-04-05 13:21,admin,admin,
1774,141517,1749,35922,642,0,N,N,N,CP_Drtn,TT_Task,DT_FixedDUR2,TK_NotStart,OFF-PRO-MEP-AC1350,Issue Purchase Order of Chilled Water Pumps,,1952,0,96,0,0,0,96,12,0,12,,,,2015-09-12 08:00,2015-09-23 16:00,,2014-12-16 08:00,2014-12-29 16:00,2014-12-16 08:00,2014-12-29 16:00,2014-12-16 08:00,2014-12-29 16:00,2015-09-12 08:00,2015-09-23 16:00,,PT_Normal,,,,,65PJD1tYtUu3zaFO1RtEZw,2YpFj7s7Y0mN1fkki/E/Xg,,,N,0,0,,,2014-04-05 12:27,2014-04-05 13:21,admin,admin,
1775,141518,1749,35922,1447,0,N,N,N,CP_Drtn,TT_Task,DT_FixedDUR2,TK_NotStart,OFF-PRO-MEP-AC1360,Manufacturing & Shipping of Chilled Water Pumps,,2144,0,576,0,0,0,576,72,0,72,,,,2015-09-24 08:00,2015-12-04 16:00,,2014-12-30 08:00,2015-03-11 16:00,2014-12-30 08:00,2015-03-11 16:00,2014-12-30 08:00,2015-03-11 16:00,2015-09-24 08:00,2015-12-04 16:00,,PT_Normal,,,,,Y+DLemXZ506F4IaDDBtPzg,E1wl7LCD/0SZcmYN/IqmaQ,,,N,0,0,,,2014-04-05 12:27,2014-04-05 13:21,admin,admin,
1776,141519,1749,35922,642,0,N,N,N,CP_Drtn,TT_Task,DT_FixedDUR2,TK_NotStart,OFF-PRO-MEP-AC1370,Clearance & Delivery to Site of Chilled Water Pumps,,2048,1352,224,0,0,0,224,28,0,28,,,,2015-12-05 08:00,2016-01-01 16:00,,2015-03-12 08:00,2015-04-13 16:00,2015-03-12 08:00,2015-04-13 16:00,2015-03-12 08:00,2015-04-13 16:00,2015-12-05 08:00,2016-01-01 16:00,,PT_Normal,,,,,dmV17AMjjE6+x5RT/DPwzw,mjA17lOdtkOcw/fPxk+9XA,,,N,0,0,,,2014-04-05 12:27,2014-04-05 13:21,admin,admin,
1777,141520,1749,35985,642,0,N,N,N,CP_Drtn,TT_Task,DT_FixedDUR2,TK_NotStart,OFF-PRO-MEP-AC1480,Preparation & Submission of Interia Bases and Anti Vibration Springs,,1032,0,240,0,0,0,240,30,0,30,,,,2015-05-16 08:00,2015-06-16 16:00,,2014-12-14 08:00,2015-01-19 16:00,2014-12-14 08:00,2015-01-19 16:00,2014-12-14 08:00,2015-01-19 16:00,2015-05-16 08:00,2015-06-16 16:00,,PT_Normal,,,,,bwAkoppPCECZGP6t+qcISg,wzXJCr3ahk+6Wfh0+U6E3w,,,N,0,0,,,2014-04-05 12:27,2014-04-05 13:21,admin,admin,
1778,141521,1749,35985,642,0,N,N,N,CP_Drtn,TT_Task,DT_FixedDUR2,TK_NotStart,OFF-PRO-MEP-AC1490,Review & Approval of Interia Bases and Anti Vibration Springs,,1032,0,96,0,0,0,96,12,0,12,,,,2015-06-17 08:00,2015-06-28 16:00,,2015-01-20 08:00,2015-02-02 16:00,2015-01-20 08:00,2015-02-02 16:00,2015-01-20 08:00,2015-02-02 16:00,2015-06-17 08:00,2015-06-28 16:00,,PT_Normal,,,,,drOtaQsASke6j68FmyDNbw,MSmRwCprekG8kys/60uQCw,,,N,0,0,,,2014-04-05 12:27,2014-04-05 13:21,admin,admin,
1779,141522,1749,35985,642,0,N,N,N,CP_Drtn,TT_Task,DT_FixedDUR2,TK_NotStart,OFF-PRO-MEP-AC1500,Issue Purchase Order of Interia Bases and Anti Vibration Springs,,1032,0,96,0,0,0,96,12,0,12,,,,2015-06-29 08:00,2015-07-10 16:00,,2015-02-03 08:00,2015-02-16 16:00,2015-02-03 08:00,2015-02-16 16:00,2015-02-03 08:00,2015-02-16 16:00,2015-06-29 08:00,2015-07-10 16:00,,PT_Normal,,,,,9JgDLQjVU06zeERuMlE7GA,jwWHC1QIW0iIJrZMROVgXw,,,N,0,0,,,2014-04-05 12:27,2014-04-05 13:21,admin,admin,
1780,141523,1749,35985,1447,0,N,N,N,CP_Drtn,TT_Task,DT_FixedDUR2,TK_NotStart,OFF-PRO-MEP-AC1510,Manufacturing & Shipping of Interia Bases and Anti Vibration Springs,,1152,0,576,0,0,0,576,72,0,72,,,,2015-07-11 08:00,2015-09-20 16:00,,2015-02-17 08:00,2015-04-29 16:00,2015-02-17 08:00,2015-04-29 16:00,2015-02-17 08:00,2015-04-29 16:00,2015-07-11 08:00,2015-09-20 16:00,,PT_Normal,,,,,NvHGnNk1HEm95GMcINkSnA,nACVk6tMwUe99hIy1DA/7A,,,N,0,0,,,2014-04-05 12:27,2014-04-05 13:21,admin,admin,
1781,141524,1749,35985,642,0,N,N,N,CP_Drtn,TT_Task,DT_FixedDUR2,TK_NotStart,OFF-PRO-MEP-AC1520,Clearance & Delivery to Site of Interia Bases and Anti Vibration Springs,,1112,416,224,0,0,0,224,28,0,28,,,,2015-09-21 08:00,2015-10-18 16:00,,2015-04-30 08:00,2015-06-01 16:00,2015-04-30 08:00,2015-06-01 16:00,2015-04-30 08:00,2015-06-01 16:00,2015-09-21 08:00,2015-10-18 16:00,,PT_Normal,,,,,35poznMj1E6zoDjH10BYKA,t38pl75ubk2b1RsAdvUZnQ,,,N,0,0,,,2014-04-05 12:27,2014-04-05 13:21,admin,admin,
1782,141525,1749,36030,642,0,N,N,N,CP_Drtn,TT_Task,DT_FixedDUR2,TK_NotStart,OFF-PRO-MEP-AC1060,Issue Purchase Order of Flexible Ducts,,1224,0,96,0,0,0,96,12,0,12,,,,2015-03-23 08:00,2015-04-05 16:00,,2014-09-15 08:00,2014-09-28 16:00,2014-09-15 08:00,2014-09-28 16:00,2014-09-15 08:00,2014-09-28 16:00,2015-03-23 08:00,2015-04-05 16:00,,PT_Normal,,,,,VOnppJscBEq4ebKwdojCrw,Ntf49tX/3Uu8je2ubTV4Wg,,,N,0,0,,,2014-04-05 12:27,2014-04-05 13:21,admin,admin,
1783,141526,1749,36030,1447,0,N,N,N,CP_Drtn,TT_Task,DT_FixedDUR2,TK_NotStart,OFF-PRO-MEP-AC1070,Manufacturing & Shipping of Flexible Ducts,,1512,0,288,0,0,0,288,36,0,36,,,,2015-04-06 08:00,2015-05-11 16:00,,2014-09-29 08:00,2014-11-03 16:00,2014-09-29 08:00,2014-11-03 16:00,2014-09-29 08:00,2014-11-03 16:00,2015-04-06 08:00,2015-05-11 16:00,,PT_Normal,,,,,PiMpqwa4ikO6WjcbYC/qvA,qLNCWPM3SU2EGiReuE/eZw,,,N,0,0,,,2014-04-05 12:27,2014-04-05 13:21,admin,admin,
1784,141527,1749,36030,642,0,N,N,N,CP_Drtn,TT_Task,DT_FixedDUR2,TK_NotStart,OFF-PRO-MEP-AC1080,Clearance & Delivery to Site of Flexible Ducts,,1280,528,96,0,0,0,96,12,0,12,,,,2015-05-12 08:00,2015-05-25 16:00,,2014-11-04 08:00,2014-11-17 16:00,2014-11-04 08:00,2014-11-17 16:00,2014-11-04 08:00,2014-11-17 16:00,2015-05-12 08:00,2015-05-25 16:00,,PT_Normal,,,,,KPbDP4NAFEe8nIbvS524hA,P8UIWBCnOEiGM1VMqqhajw,,,N,0,0,,,2014-04-05 12:27,2014-04-05 13:21,admin,admin,
1785,141528,1749,35921,642,0,N,N,N,CP_Drtn,TT_Task,DT_FixedDUR2,TK_NotStart,OFF-PRO-MEP-AC1230,Preparation & Submission of Air Handing Units (AHU's),,1368,0,240,0,0,0,240,30,0,30,,,,2015-02-02 08:00,2015-03-08 16:00,,2014-06-23 08:00,2014-08-10 16:00,2014-06-23 08:00,2014-08-10 16:00,2014-06-23 08:00,2014-08-10 16:00,2015-02-02 08:00,2015-03-08 16:00,,PT_Normal,,,,,PJJz0mchMk2hALXsmFtepw,+8vdBzChm0ygS422kRMICQ,,,N,0,0,,,2014-04-05 12:27,2014-04-05 13:21,admin,admin,
1786,141529,1749,35921,642,0,N,N,N,CP_Drtn,TT_Task,DT_FixedDUR2,TK_NotStart,OFF-PRO-MEP-AC1240,Review & Approval of Air Handing Units (AHU's),,1368,0,96,0,0,0,96,12,0,12,,,,2015-03-09 08:00,2015-03-22 16:00,,2014-08-11 08:00,2014-08-24 16:00,2014-08-11 08:00,2014-08-24 16:00,2014-08-11 08:00,2014-08-24 16:00,2015-03-09 08:00,2015-03-22 16:00,,PT_Normal,,,,,n5V4lEMwPECsh5orSSgZ1g,bkCDq2HAlUuQi4ZQODOPXw,,,N,0,0,,,2014-04-05 12:27,2014-04-05 13:21,admin,admin,
1787,141530,1749,35921,642,0,N,N,N,CP_Drtn,TT_Task,DT_FixedDUR2,TK_NotStart,OFF-PRO-MEP-AC1250,Issue Purchase Order of Air Handing Units (AHU's),,1368,0,96,0,0,0,96,12,0,12,,,,2015-06-01 08:00,2015-06-12 16:00,,2014-11-11 08:00,2014-11-24 16:00,2014-11-11 08:00,2014-11-24 16:00,2014-11-11 08:00,2014-11-24 16:00,2015-06-01 08:00,2015-06-12 16:00,,PT_Normal,,,,,f+nvAHNIBkiahix07lh2yg,oxwELvhIfUiKuhTzSyTkXA,,,N,0,0,,,2014-04-05 12:27,2014-04-05 13:21,admin,admin,
1788,141531,1749,35921,1447,0,N,N,N,CP_Drtn,TT_Task,DT_FixedDUR2,TK_NotStart,OFF-PRO-MEP-AC1260,Manufacturing & Shipping of Air Handing Units (AHU's),,1600,0,960,0,0,0,960,120,0,120,,,,2015-06-13 08:00,2015-10-10 16:00,,2014-11-25 08:00,2015-03-24 16:00,2014-11-25 08:00,2015-03-24 16:00,2014-11-25 08:00,2015-03-24 16:00,2015-06-13 08:00,2015-10-10 16:00,,PT_Normal,,,,,VnXgvJoHFUCCYzilHzccqA,F5ezQZc2ZEiO2kLgbljY4A,,,N,0,0,,,2014-04-05 12:27,2014-04-05 13:21,admin,admin,
1789,141532,1749,35921,642,0,N,N,N,CP_Drtn,TT_Task,DT_FixedDUR2,TK_NotStart,OFF-PRO-MEP-AC1270,Clearance & Delivery to Site of Air Handing Units (AHU's),,1520,808,224,0,0,0,224,28,0,28,,,,2015-10-11 08:00,2015-11-07 16:00,,2015-03-25 08:00,2015-04-26 16:00,2015-03-25 08:00,2015-04-26 16:00,2015-03-25 08:00,2015-04-26 16:00,2015-10-11 08:00,2015-11-07 16:00,,PT_Normal,,,,,CW3Lq8l3TUK1BRtkCl/G8w,zsUgD/oLvEGnWMhyQiAznQ,,,N,0,0,,,2014-04-05 12:27,2014-04-05 13:21,admin,admin,
1790,141533,1749,35931,642,0,N,N,N,CP_Drtn,TT_Task,DT_FixedDUR2,TK_NotStart,OFF-PRO-MEP-AC1000,Issue Purchase Order of GI Ducts,,424,0,96,0,0,0,96,12,0,12,,,,2014-10-16 08:00,2014-10-30 16:00,,2014-08-11 08:00,2014-08-24 16:00,2014-08-11 08:00,2014-08-24 16:00,2014-08-11 08:00,2014-08-24 16:00,2014-10-16 08:00,2014-10-30 16:00,,PT_Normal,,,,,5ov0iXD900aNLGdjghxPiQ,90SHubXf/UGctxnqGnujIw,,,N,0,0,,,2014-04-05 12:27,2014-04-05 13:21,admin,admin,
1791,141534,1749,35931,1447,0,N,N,N,CP_Drtn,TT_Task,DT_FixedDUR2,TK_NotStart,OFF-PRO-MEP-AC1010,Manufacturing & Shipping of GI Ducts,,552,0,720,0,0,0,720,90,0,90,,,,2014-11-02 08:00,2015-01-30 16:00,,2014-08-25 08:00,2014-11-22 16:00,2014-08-25 08:00,2014-11-22 16:00,2014-08-25 08:00,2014-11-22 16:00,2014-11-02 08:00,2015-01-30 16:00,,PT_Normal,,,,,Qu0R7qDLRkKdwnyLc27XXQ,uPlZUUKEYE6fBbpuyPvXow,,,N,0,0,,,2014-04-05 12:27,2014-04-05 13:21,admin,admin,
1792,141535,1749,35931,642,0,N,N,N,CP_Drtn,TT_Task,DT_FixedDUR2,TK_NotStart,OFF-PRO-MEP-AC1020,Clearance & Delivery to Site of GI Ducts,,456,0,96,0,0,0,96,12,0,12,,,,2015-01-31 08:00,2015-02-12 16:00,,2014-11-23 08:00,2014-12-06 16:00,2014-11-23 08:00,2014-12-06 16:00,2014-11-23 08:00,2014-12-06 16:00,2015-01-31 08:00,2015-02-12 16:00,,PT_Normal,,,,,dD1ZFTniAECAacWI9+u5OQ,BdL3O9zD/kqn0qIhN+Mvcw,,,N,0,0,,,2014-04-05 12:27,2014-04-05 13:21,admin,admin,
1793,141536,1749,35927,642,0,N,N,N,CP_Drtn,TT_Task,DT_FixedDUR2,TK_NotStart,OFF-PRO-MEP-AC1180,Preparation & Submission of Heat Pumps,,1352,0,240,0,0,0,240,30,0,30,,,,2015-01-31 08:00,2015-03-05 16:00,,2014-06-23 08:00,2014-08-10 16:00,2014-06-23 08:00,2014-08-10 16:00,2014-06-23 08:00,2014-08-10 16:00,2015-01-31 08:00,2015-03-05 16:00,,PT_Normal,,,,,MPAdTbEyWk2XhhAn7/B20w,vEuNSHy/lkeyj2FfGDR7mg,,,N,0,0,,,2014-04-05 12:27,2014-04-05 13:21,admin,admin,
1794,141537,1749,35927,642,0,N,N,N,CP_Drtn,TT_Task,DT_FixedDUR2,TK_NotStart,OFF-PRO-MEP-AC1190,Review & Approval of Heat Pumps,,1352,0,96,0,0,0,96,12,0,12,,,,2015-03-07 08:00,2015-03-19 16:00,,2014-08-11 08:00,2014-08-24 16:00,2014-08-11 08:00,2014-08-24 16:00,2014-08-11 08:00,2014-08-24 16:00,2015-03-07 08:00,2015-03-19 16:00,,PT_Normal,,,,,DowghidYv0yyLdppn6BQhg,404KrNZt/0KU4Wt2k3ZIjw,,,N,0,0,,,2014-04-05 12:27,2014-04-05 13:21,admin,admin,
1795,141538,1749,35927,642,0,N,N,N,CP_Drtn,TT_Task,DT_FixedDUR2,TK_NotStart,OFF-PRO-MEP-AC1200,Issue Purchase Order of Heat Pumps,,1352,0,96,0,0,0,96,12,0,12,,,,2015-05-30 08:00,2015-06-10 16:00,,2014-11-11 08:00,2014-11-24 16:00,2014-11-11 08:00,2014-11-24 16:00,2014-11-11 08:00,2014-11-24 16:00,2015-05-30 08:00,2015-06-10 16:00,,PT_Normal,,,,,93nzzf4WAE2iU5uYIUhuJQ,k5hNM6g7TkW/xJfcjOnq8g,,,N,0,0,,,2014-04-05 12:27,2014-04-05 13:21,admin,admin,
1796,141539,1749,35927,1447,0,N,N,N,CP_Drtn,TT_Task,DT_FixedDUR2,TK_NotStart,OFF-PRO-MEP-AC1210,Manufacturing & Shipping of Heat Pumps,,1584,0,960,0,0,0,960,120,0,120,,,,2015-06-11 08:00,2015-10-08 16:00,,2014-11-25 08:00,2015-03-24 16:00,2014-11-25 08:00,2015-03-24 16:00,2014-11-25 08:00,2015-03-24 16:00,2015-06-11 08:00,2015-10-08 16:00,,PT_Normal,,,,,sdcSBc96vEWUI14OS49dUg,LS4fMsY6W0uqGTobiTVRNA,,,N,0,0,,,2014-04-05 12:27,2014-04-05 13:21,admin,admin,
1797,141540,1749,35927,642,0,N,N,N,CP_Drtn,TT_Task,DT_FixedDUR2,TK_NotStart,OFF-PRO-MEP-AC1220,Clearance & Delivery to Site of Heat Pumps,,1504,808,224,0,0,0,224,28,0,28,,,,2015-10-09 08:00,2015-11-05 16:00,,2015-03-25 08:00,2015-04-26 16:00,2015-03-25 08:00,2015-04-26 16:00,2015-03-25 08:00,2015-04-26 16:00,2015-10-09 08:00,2015-11-05 16:00,,PT_Normal,,,,,QDySNPX38E63MIuHmJrqzg,/EHQpAoGPEicmoDZ4TMYfw,,,N,0,0,,,2014-04-05 12:27,2014-04-05 13:21,admin,admin,
1798,141541,1749,35970,642,0,N,N,N,CP_Drtn,TT_Task,DT_FixedDUR2,TK_NotStart,PROCMEPELE5860,Preparation & Submission of HV Switchgear,,3128,0,240,0,0,0,240,30,0,30,,,,2015-05-30 08:00,2015-06-28 16:00,,2014-02-01 08:00,2014-03-06 16:00,2014-02-01 08:00,2014-03-06 16:00,2014-02-01 08:00,2014-03-06 16:00,2015-05-30 08:00,2015-06-28 16:00,,PT_Normal,,,,,vUjQFfrKgEOWgT1eZQI7sw,EFRSv+9liUGABAmeOFASkg,,,N,0,0,,,2014-04-05 12:27,2014-04-05 13:21,admin,admin,
1799,141542,1749,35970,642,0,N,N,N,CP_Drtn,TT_Task,DT_FixedDUR2,TK_NotStart,PROCMEPELE7210,Review & Approval of HV Switchgear,,3128,0,96,0,0,0,96,12,0,12,,,,2015-06-29 08:00,2015-07-10 16:00,,2014-03-08 08:00,2014-03-20 16:00,2014-03-08 08:00,2014-03-20 16:00,2014-03-08 08:00,2014-03-20 16:00,2015-06-29 08:00,2015-07-10 16:00,,PT_Normal,,,,,BEHTONbgi0eu3m49PMUhOQ,ybEEiKsW1kGq9sPPhYpscQ,,,N,0,0,,,2014-04-05 12:27,2014-04-05 13:21,admin,admin,
1800,141543,1749,35970,642,0,N,N,N,CP_Drtn,TT_Task,DT_FixedDUR2,TK_NotStart,PROCMEPELE7840,Issue Purchase Order of HV Switchgear,,3128,0,96,0,0,0,96,12,0,12,,,,2015-07-11 08:00,2015-07-22 16:00,,2014-03-22 08:00,2014-04-03 16:00,2014-03-22 08:00,2014-04-03 16:00,2014-03-22 08:00,2014-04-03 16:00,2015-07-11 08:00,2015-07-22 16:00,,PT_Normal,,,,,dYlBWZlm9UCqGhIJ4qslrg,DpGdx5RgYku2mkktCelfEQ,,,N,0,0,,,2014-04-05 12:27,2014-04-05 13:21,admin,admin,
1801,141544,1749,35970,642,0,N,N,N,CP_Drtn,TT_Task,DT_FixedDUR2,TK_NotStart,PROCMEPELE8200,Manufacturing & Shipping of HV Switchgear,,3128,0,480,0,0,0,480,60,0,60,,,,2015-07-23 08:00,2015-09-20 16:00,,2014-04-05 08:00,2014-06-14 16:00,2014-04-05 08:00,2014-06-14 16:00,2014-04-05 08:00,2014-06-14 16:00,2015-07-23 08:00,2015-09-20 16:00,,PT_Normal,,,,,3yop4K26+kePSxCnOq4LkA,/s0jL7CiMEeMy4Zvskzicg,,,N,0,0,,,2014-04-05 12:27,2014-04-05 13:21,admin,admin,
1802,141545,1749,35970,642,0,N,N,N,CP_Drtn,TT_Task,DT_FixedDUR2,TK_NotStart,PROCMEPELE9010,Clearance & Delivery to Site of HV Switchgear,,3128,2560,96,0,0,0,96,12,0,12,,,,2015-09-21 08:00,2015-10-02 16:00,,2014-06-15 08:00,2014-06-29 16:00,2014-06-15 08:00,2014-06-29 16:00,2014-06-15 08:00,2014-06-29 16:00,2015-09-21 08:00,2015-10-02 16:00,,PT_Normal,,,,,6OlAu+dZGEqba1y5A7lKWg,KOORAT3h0kSZP+BrH48LSA,,,N,0,0,,,2014-04-05 12:27,2014-04-05 13:21,admin,admin,
1803,141546,1749,36011,642,0,N,N,N,CP_Drtn,TT_Task,DT_FixedDUR2,TK_NotStart,PROCMEPELE3250,Issue Purchase Order of Wires for Lighting & Power,,2572,0,96,0,0,0,96,12,0,12,,,,2015-03-09 12:00,2015-03-23 12:00,,2014-02-01 08:00,2014-02-13 16:00,2014-02-01 08:00,2014-02-13 16:00,2014-02-01 08:00,2014-02-13 16:00,2015-03-09 12:00,2015-03-23 12:00,,PT_Normal,,,,,XRwmuF0WXUS/M1ixUBswKQ,5qBKePAs/Um29owYZSDDQw,,,N,0,0,,,2014-04-05 12:27,2014-04-05 13:21,admin,admin,
1804,141547,1749,36011,642,0,N,N,N,CP_Drtn,TT_Task,DT_FixedDUR2,TK_NotStart,PROCMEPELE4060,Manufacturing & Shipping of Wires for Lighting & Power,,2572,0,288,0,0,0,288,36,0,36,,,,2015-03-23 12:00,2015-05-04 12:00,,2014-02-15 08:00,2014-03-27 16:00,2014-02-15 08:00,2014-03-27 16:00,2014-02-15 08:00,2014-03-27 16:00,2015-03-23 12:00,2015-05-04 12:00,,PT_Normal,,,,,8KOC2vINPkGuDGKlN8f4dw,y9yOK9COM0yN0YNbeK/ZCQ,,,N,0,0,,,2014-04-05 12:27,2014-04-05 13:21,admin,admin,
1805,141548,1749,36011,642,0,N,N,N,CP_Drtn,TT_Task,DT_FixedDUR2,TK_NotStart,PROCMEPELE5680,Clearance & Delivery to Site of Wires for Lighting & Power,,2572,960,96,0,0,0,96,12,0,12,,,,2015-05-04 12:00,2015-05-18 12:00,,2014-03-29 08:00,2014-04-10 16:00,2014-03-29 08:00,2014-04-10 16:00,2014-03-29 08:00,2014-04-10 16:00,2015-05-04 12:00,2015-05-18 12:00,,PT_Normal,,,,,0vYW/pdbTUamTALAzcfNsw,3TbkhhN150G5Yx5oeFJ2kA,,,N,0,0,,,2014-04-05 12:27,2014-04-05 13:21,admin,admin,
1806,141549,1749,35994,642,0,N,N,N,CP_Drtn,TT_Task,DT_FixedDUR2,TK_NotStart,PROCMEPELE9340,Preparation & Submission of SMDB,,2088,0,240,0,0,0,240,30,0,30,,,,2014-12-27 08:00,2015-02-01 16:00,,2014-02-01 08:00,2014-03-06 16:00,2014-02-01 08:00,2014-03-06 16:00,2014-02-01 08:00,2014-03-06 16:00,2014-12-27 08:00,2015-02-01 16:00,,PT_Normal,,,,,LJ8R0QM4YkGV5YtxxgVn1Q,B9Uz7Nui506wCCKVIBmbQQ,,,N,0,0,,,2014-04-05 12:27,2014-04-05 13:21,admin,admin,
1807,141550,1749,35994,642,0,N,N,N,CP_Drtn,TT_Task,DT_FixedDUR2,TK_NotStart,PROCMEPELE9350,Review & Approval of SMDB,,2088,0,96,0,0,0,96,12,0,12,,,,2015-02-02 08:00,2015-02-15 16:00,,2014-03-08 08:00,2014-03-20 16:00,2014-03-08 08:00,2014-03-20 16:00,2014-03-08 08:00,2014-03-20 16:00,2015-02-02 08:00,2015-02-15 16:00,,PT_Normal,,,,,g1vsZUjnDE+EyM6tndFtyg,tQ1sR3aey0KUMkG6i8s7RA,,,N,0,0,,,2014-04-05 12:27,2014-04-05 13:21,admin,admin,
1808,141551,1749,35994,642,0,N,N,N,CP_Drtn,TT_Task,DT_FixedDUR2,TK_NotStart,PROCMEPELE9360,Issue Purchase Order of SMDB,,2088,0,96,0,0,0,96,12,0,12,,,,2015-02-16 08:00,2015-03-01 16:00,,2014-03-22 08:00,2014-04-03 16:00,2014-03-22 08:00,2014-04-03 16:00,2014-03-22 08:00,2014-04-03 16:00,2015-02-16 08:00,2015-03-01 16:00,,PT_Normal,,,,,AFWsDGixt0221bpEquuyoA,Oo58d1oWeUWX1QE2xRxzCA,,,N,0,0,,,2014-04-05 12:27,2014-04-05 13:21,admin,admin,
1809,141552,1749,35994,642,0,N,N,N,CP_Drtn,TT_Task,DT_FixedDUR2,TK_NotStart,PROCMEPELE9370,Manufacturing & Shipping of SMDB,,2088,0,576,0,0,0,576,72,0,72,,,,2015-03-02 08:00,2015-05-24 16:00,,2014-04-05 08:00,2014-06-29 16:00,2014-04-05 08:00,2014-06-29 16:00,2014-04-05 08:00,2014-06-29 16:00,2015-03-02 08:00,2015-05-24 16:00,,PT_Normal,,,,,JhWRyTXlK0KSgqF+Wyrw+Q,dV6HC9aUOUCbrlc/npV3Zg,,,N,0,0,,,2014-04-05 12:27,2014-04-05 13:21,admin,admin,
1810,141553,1749,35994,642,0,N,N,N,CP_Drtn,TT_Task,DT_FixedDUR2,TK_NotStart,PROCMEPELE9380,Clearance & Delivery to Site of SMDB,,2088,336,96,0,0,0,96,12,0,12,,,,2015-05-25 08:00,2015-06-06 16:00,,2014-06-30 08:00,2014-07-22 14:00,2014-06-30 08:00,2014-07-22 14:00,2014-06-30 08:00,2014-07-22 14:00,2015-05-25 08:00,2015-06-06 16:00,,PT_Normal,,,,,B26X9YAnlESIzf41saCSfg,ElbmUfZPU0WWAlr4Xtd47g,,,N,0,0,,,2014-04-05 12:27,2014-04-05 13:21,admin,admin,
1811,141554,1749,36013,642,0,N,N,N,CP_Drtn,TT_Task,DT_FixedDUR2,TK_NotStart,PROCMEPELE1900,Manufacturing & Shipping of Cable Tray / Trunking,,1488,0,360,0,0,0,360,45,0,45,,,,2015-03-05 08:00,2015-04-26 16:00,,2014-07-11 10:00,2014-09-10 16:00,2014-07-11 10:00,2014-09-10 16:00,2014-07-11 10:00,2014-09-10 16:00,2015-03-05 08:00,2015-04-26 16:00,,PT_Normal,,,,,avRdqoAIDE6ouVJ5rtg7sg,uWtun5m/8UCiRPqidhj8ug,,,N,0,0,,,2014-04-05 12:27,2014-04-05 13:21,admin,admin,
1812,141555,1749,36013,642,0,N,N,N,CP_Drtn,TT_Task,DT_FixedDUR2,TK_NotStart,PROCMEPELE3340,Clearance & Delivery to Site of Cable Tray / Trunking,,1488,0,96,0,0,0,96,12,0,12,,,,2015-04-27 08:00,2015-05-10 16:00,,2014-09-11 08:00,2014-09-24 16:00,2014-09-11 08:00,2014-09-24 16:00,2014-09-11 08:00,2014-09-24 16:00,2015-04-27 08:00,2015-05-10 16:00,,PT_Normal,,,,,4UGsQ9um4UCd9iFZda+oRQ,Iq1UfJ7cREO5Rqrs9Y+tUA,,,N,0,0,,,2014-04-05 12:27,2014-04-05 13:21,admin,admin,
1813,141556,1749,36013,642,0,N,N,N,CP_Drtn,TT_Task,DT_FixedDUR2,TK_NotStart,PROCMEPELE1540,Issue Purchase Order of Cable Tray / Trunking,,1488,0,96,0,0,0,96,12,0,12,,,,2015-02-19 08:00,2015-03-04 16:00,,2014-06-23 08:00,2014-07-10 14:00,2014-06-23 08:00,2014-07-10 14:00,2014-06-23 08:00,2014-07-10 14:00,2015-02-19 08:00,2015-03-04 16:00,,PT_Normal,,,,,PxaHVIk2506dtWSgeWoW2g,s1pEiHaz0kWHFHHIJb+OIQ,,,N,0,0,,,2014-04-05 12:27,2014-04-05 13:21,admin,admin,
1814,141557,1749,36014,642,0,N,N,N,CP_Drtn,TT_Task,DT_FixedDUR2,TK_NotStart,PROCMEPELE1180,Issue Purchase Order of PVC Back Boxes,,768,0,96,0,0,0,96,12,0,12,,,,2014-10-15 08:00,2014-10-29 16:00,,2014-06-05 08:00,2014-06-18 16:00,2014-06-05 08:00,2014-06-18 16:00,2014-06-05 08:00,2014-06-18 16:00,2014-10-15 08:00,2014-10-29 16:00,CS_ALAP,PT_Normal,,,,,jZiYDOszDkmkqrl4b1kjhg,b4/Vp7l9lUyxb1sCucaoFw,,,N,0,0,,,2014-04-05 12:27,2014-04-05 13:21,admin,admin,
1815,141558,1749,36014,1447,0,N,N,N,CP_Drtn,TT_Task,DT_FixedDUR2,TK_NotStart,PROCMEPELE1360,Manufacturing & Shipping of PVC Back Boxes,,1064,0,480,0,0,0,480,60,0,60,,,,2014-10-30 08:00,2014-12-28 16:00,,2014-06-19 08:00,2014-08-17 16:00,2014-06-19 08:00,2014-08-17 16:00,2014-06-19 08:00,2014-08-17 16:00,2014-10-30 08:00,2014-12-28 16:00,CS_ALAP,PT_Normal,,,,,6XkdtOFFK0CbP6/vawNJWw,lYN5463cHUiddNIaAp/vIg,,,N,0,0,,,2014-04-05 12:27,2014-04-05 13:21,admin,admin,
1816,141559,1749,36014,642,0,N,N,N,CP_Drtn,TT_Task,DT_FixedDUR2,TK_NotStart,PROCMEPELE2080,Clearance & Delivery to Site of PVC Back Boxes,,856,0,96,0,0,0,96,12,0,12,,,,2014-12-29 08:00,2015-01-13 16:00,,2014-08-18 08:00,2014-08-31 16:00,2014-08-18 08:00,2014-08-31 16:00,2014-08-18 08:00,2014-08-31 16:00,2014-12-29 08:00,2015-01-13 16:00,CS_ALAP,PT_Normal,,,,,hciWeQZVd0yuuY+dF6cxZg,Dx9yd1ucY0y2wRZv4G2VWg,,,N,0,0,,,2014-04-05 12:27,2014-04-05 13:21,admin,admin,
1817,141560,1749,36006,642,0,N,N,N,CP_Drtn,TT_Task,DT_FixedDUR2,TK_NotStart,PROCMEPELE3700,Preparation & Submission of Wiring Accessories,,1052,0,240,0,0,0,240,30,0,30,,,,2014-12-15 12:00,2015-01-21 12:00,,2014-06-23 08:00,2014-08-10 16:00,2014-06-23 08:00,2014-08-10 16:00,2014-06-23 08:00,2014-08-10 16:00,2014-12-15 12:00,2015-01-21 12:00,,PT_Normal,,,,,LhgQ7hnXYUmqZQEA9dMcSQ,c4MBc6IawEmeuLJ72tEY0A,,,N,0,0,,,2014-04-05 12:27,2014-04-05 13:21,admin,admin,
1818,141561,1749,36006,642,0,N,N,N,CP_Drtn,TT_Task,DT_FixedDUR2,TK_NotStart,PROCMEPELE5410,Review & Approval of Wiring Accessories,,1052,0,96,0,0,0,96,12,0,12,,,,2015-01-21 12:00,2015-02-04 12:00,,2014-08-11 08:00,2014-08-24 16:00,2014-08-11 08:00,2014-08-24 16:00,2014-08-11 08:00,2014-08-24 16:00,2015-01-21 12:00,2015-02-04 12:00,,PT_Normal,,,,,TxWwThC2R0+9HW5fOjNAoA,CkiWIN7gE0+YiMDlI4kmyw,,,N,0,0,,,2014-04-05 12:27,2014-04-05 13:21,admin,admin,
1819,141562,1749,36006,642,0,N,N,N,CP_Drtn,TT_Task,DT_FixedDUR2,TK_NotStart,PROCMEPELE6220,Issue Purchase Order of Wiring Accessories,,1052,0,96,0,0,0,96,12,0,12,,,,2015-04-15 12:00,2015-04-29 12:00,,2014-11-11 08:00,2014-11-24 16:00,2014-11-11 08:00,2014-11-24 16:00,2014-11-11 08:00,2014-11-24 16:00,2015-04-15 12:00,2015-04-29 12:00,,PT_Normal,,,,,WuKJko77AUyqT4IfGpL1Hw,oHSyisR3L0qAKP0iJgNHBA,,,N,0,0,,,2014-04-05 12:27,2014-04-05 13:21,admin,admin,
1820,141563,1749,36006,642,0,N,N,N,CP_Drtn,TT_Task,DT_FixedDUR2,TK_NotStart,PROCMEPELE6670,Manufacturing & Shipping of Wiring Accessories,,1052,0,720,0,0,0,720,90,0,90,,,,2015-04-29 12:00,2015-08-02 12:00,,2014-11-25 08:00,2015-03-11 16:00,2014-11-25 08:00,2015-03-11 16:00,2014-11-25 08:00,2015-03-11 16:00,2015-04-29 12:00,2015-08-02 12:00,,PT_Normal,,,,,LItEVleOGUe2n10nu949/g,AgFzuuRCrEaQK1O79zPGDA,,,N,0,0,,,2014-04-05 12:27,2014-04-05 13:21,admin,admin,
1821,141564,1749,36006,642,0,N,N,N,CP_Drtn,TT_Task,DT_FixedDUR2,TK_NotStart,PROCMEPELE8830,Clearance & Delivery to Site of Wiring Accessories,,1052,0,96,0,0,0,96,12,0,12,,,,2015-08-02 12:00,2015-08-14 12:00,,2015-03-12 08:00,2015-03-25 16:00,2015-03-12 08:00,2015-03-25 16:00,2015-03-12 08:00,2015-03-25 16:00,2015-08-02 12:00,2015-08-14 12:00,,PT_Normal,,,,,SGstVna68ku7laFVxo8JdQ,vNS1hIL0p02ruiR3+Zp3uQ,,,N,0,0,,,2014-04-05 12:27,2014-04-05 13:21,admin,admin,
1822,141565,1749,35937,642,0,N,N,N,CP_Drtn,TT_Task,DT_FixedDUR2,TK_NotStart,PROCMEPELE6760,Clearance & Delivery to Site of Structure  Cabling,,2044,864,96,0,0,0,96,12,0,12,,,,2015-06-17 12:00,2015-06-29 12:00,,2014-08-16 08:00,2014-08-28 16:00,2014-08-16 08:00,2014-08-28 16:00,2014-08-16 08:00,2014-08-28 16:00,2015-06-17 12:00,2015-06-29 12:00,,PT_Normal,,,,,4y8tbpPWmEe84B17TjpAeA,ujkMzOJsK0qBRAZbOvvuzg,,,N,0,0,,,2014-04-05 12:27,2014-04-05 13:21,admin,admin,
1823,141566,1749,35937,642,0,N,N,N,CP_Drtn,TT_Task,DT_FixedDUR2,TK_NotStart,PROCMEPELE2260,Preparation & Submission of Structure  Cabling,,2044,0,240,0,0,0,240,30,0,30,,,,2015-03-02 12:00,2015-04-06 12:00,,2014-04-12 08:00,2014-05-17 16:00,2014-04-12 08:00,2014-05-17 16:00,2014-04-12 08:00,2014-05-17 16:00,2015-03-02 12:00,2015-04-06 12:00,,PT_Normal,,,,,oqRJ8qU13kaObo3BK7z0Sg,oQLTBy35JEaAEAExquqSwQ,,,N,0,0,,,2014-04-05 12:27,2014-04-05 13:21,admin,admin,
1824,141567,1749,35937,642,0,N,N,N,CP_Drtn,TT_Task,DT_FixedDUR2,TK_NotStart,PROCMEPELE3430,Review & Approval of Structure  Cabling,,2044,0,96,0,0,0,96,12,0,12,,,,2015-04-06 12:00,2015-04-20 12:00,,2014-05-18 08:00,2014-05-31 16:00,2014-05-18 08:00,2014-05-31 16:00,2014-05-18 08:00,2014-05-31 16:00,2015-04-06 12:00,2015-04-20 12:00,,PT_Normal,,,,,xd5auG9onUyNTNqXXyO5WQ,1JyoqUgpPkmSpuHgAjUyNQ,,,N,0,0,,,2014-04-05 12:27,2014-04-05 13:21,admin,admin,
1825,141568,1749,35937,642,0,N,N,N,CP_Drtn,TT_Task,DT_FixedDUR2,TK_NotStart,PROCMEPELE4150,Issue Purchase Order of Structure  Cabling,,2044,0,96,0,0,0,96,12,0,12,,,,2015-04-20 12:00,2015-05-04 12:00,,2014-06-01 08:00,2014-06-14 16:00,2014-06-01 08:00,2014-06-14 16:00,2014-06-01 08:00,2014-06-14 16:00,2015-04-20 12:00,2015-05-04 12:00,,PT_Normal,,,,,or+1V6jm9USX0mM6t8VtYA,JF2RZNco6UO5LJyTF89eYw,,,N,0,0,,,2014-04-05 12:27,2014-04-05 13:21,admin,admin,
1826,141569,1749,35937,642,0,N,N,N,CP_Drtn,TT_Task,DT_FixedDUR2,TK_NotStart,PROCMEPELE4960,Manufacturing & Shipping of Structure  Cabling,,2044,0,320,0,0,0,320,40,0,40,,,,2015-05-04 12:00,2015-06-17 12:00,,2014-06-15 08:00,2014-08-14 16:00,2014-06-15 08:00,2014-08-14 16:00,2014-06-15 08:00,2014-08-14 16:00,2015-05-04 12:00,2015-06-17 12:00,,PT_Normal,,,,,02lzcq6ZzkCx3hb0Mu9ucA,I8XtJD3GVEy+Ckg2qDWQag,,,N,0,0,,,2014-04-05 12:27,2014-04-05 13:21,admin,admin,
1827,141570,1749,36008,642,0,N,N,N,CP_Drtn,TT_Task,DT_FixedDUR2,TK_NotStart,PROCMEPELE1090,Issue Purchase Order of PVC Conduits & Fittings,,768,0,96,0,0,0,96,12,0,12,,,,2014-10-15 08:00,2014-10-29 16:00,,2014-06-05 08:00,2014-06-18 16:00,2014-06-05 08:00,2014-06-18 16:00,2014-06-05 08:00,2014-06-18 16:00,2014-10-15 08:00,2014-10-29 16:00,CS_ALAP,PT_Normal,,,,,D+XimUrtcU+o20WY7bMnyQ,BFPC4PFy7UOKEtuLBURHtQ,,,N,0,0,,,2014-04-05 12:27,2014-04-05 13:21,admin,admin,
1828,141571,1749,36008,1447,0,N,N,N,CP_Drtn,TT_Task,DT_FixedDUR2,TK_NotStart,PROCMEPELE1270,Manufacturing & Shipping of PVC Conduits & Fittings,,1064,0,480,0,0,0,480,60,0,60,,,,2014-10-30 08:00,2014-12-28 16:00,,2014-06-19 08:00,2014-08-17 16:00,2014-06-19 08:00,2014-08-17 16:00,2014-06-19 08:00,2014-08-17 16:00,2014-10-30 08:00,2014-12-28 16:00,CS_ALAP,PT_Normal,,,,,e/Z4fEiCp0+fcqQ70WiFYg,nIuv0PVJQ0mXUR57W6psuw,,,N,0,0,,,2014-04-05 12:27,2014-04-05 13:21,admin,admin,
1829,141572,1749,36008,642,0,N,N,N,CP_Drtn,TT_Task,DT_FixedDUR2,TK_NotStart,PROCMEPELE1990,Clearance & Delivery to Site of PVC Conduits & Fittings,,856,0,96,0,0,0,96,12,0,12,,,,2014-12-29 08:00,2015-01-13 16:00,,2014-08-18 08:00,2014-08-31 16:00,2014-08-18 08:00,2014-08-31 16:00,2014-08-18 08:00,2014-08-31 16:00,2014-12-29 08:00,2015-01-13 16:00,CS_ALAP,PT_Normal,,,,,YY1JfvYFhEKvusPd+2ur1A,hjkgmU7gMkGBbhymiVjadg,,,N,0,0,,,2014-04-05 12:27,2014-04-05 13:21,admin,admin,
1830,141573,1749,36018,642,0,N,N,N,CP_Drtn,TT_Task,DT_FixedDUR2,TK_NotStart,PROCMEPELE9390,Preparation & Submission of MCC,,3328,0,240,0,0,0,240,30,0,30,,,,2015-06-24 08:00,2015-07-23 16:00,,2014-02-01 08:00,2014-03-06 16:00,2014-02-01 08:00,2014-03-06 16:00,2014-02-01 08:00,2014-03-06 16:00,2015-06-24 08:00,2015-07-23 16:00,,PT_Normal,,,,,WYaMzfybmkWCiM6WO/Fobw,t0YF/bVk4062NsIOxBTC2g,,,N,0,0,,,2014-04-05 12:27,2014-04-05 13:21,admin,admin,
1831,141574,1749,36018,642,0,N,N,N,CP_Drtn,TT_Task,DT_FixedDUR2,TK_NotStart,PROCMEPELE9400,Review & Approval of MCC,,3328,0,96,0,0,0,96,12,0,12,,,,2015-07-24 08:00,2015-08-04 16:00,,2014-03-08 08:00,2014-03-20 16:00,2014-03-08 08:00,2014-03-20 16:00,2014-03-08 08:00,2014-03-20 16:00,2015-07-24 08:00,2015-08-04 16:00,,PT_Normal,,,,,26Ka4q45tECVS/YqSu4U9Q,bEUtmw1iXkeCTq0uO0mWZg,,,N,0,0,,,2014-04-05 12:27,2014-04-05 13:21,admin,admin,
1832,141575,1749,36018,642,0,N,N,N,CP_Drtn,TT_Task,DT_FixedDUR2,TK_NotStart,PROCMEPELE9410,Issue Purchase Order of MCC,,3328,0,96,0,0,0,96,12,0,12,,,,2015-08-05 08:00,2015-08-16 16:00,,2014-03-22 08:00,2014-04-03 16:00,2014-03-22 08:00,2014-04-03 16:00,2014-03-22 08:00,2014-04-03 16:00,2015-08-05 08:00,2015-08-16 16:00,,PT_Normal,,,,,MoQo9r31rkenZKSQHzLmpQ,gmyTENApI0aUhFosSxPt1w,,,N,0,0,,,2014-04-05 12:27,2014-04-05 13:21,admin,admin,
1833,141576,1749,36018,642,0,N,N,N,CP_Drtn,TT_Task,DT_FixedDUR2,TK_NotStart,PROCMEPELE9420,Manufacturing & Shipping of MCC,,3328,0,576,0,0,0,576,72,0,72,,,,2015-08-17 08:00,2015-10-27 16:00,,2014-04-05 08:00,2014-06-29 16:00,2014-04-05 08:00,2014-06-29 16:00,2014-04-05 08:00,2014-06-29 16:00,2015-08-17 08:00,2015-10-27 16:00,,PT_Normal,,,,,ctMOWaa1ZUuiNovGfLbUag,AkF3bfe/akya9hdfTbb02A,,,N,0,0,,,2014-04-05 12:27,2014-04-05 13:21,admin,admin,
1834,141577,1749,36018,642,0,N,N,N,CP_Drtn,TT_Task,DT_FixedDUR2,TK_NotStart,PROCMEPELE9430,Clearance & Delivery to Site of MCC,,3328,2676,96,0,0,0,96,12,0,12,,,,2015-10-28 08:00,2015-11-08 16:00,,2014-06-30 08:00,2014-07-22 14:00,2014-06-30 08:00,2014-07-22 14:00,2014-06-30 08:00,2014-07-22 14:00,2015-10-28 08:00,2015-11-08 16:00,,PT_Normal,,,,,gLDML1xC2ECWU68JzBgeZg,elUFvtjPFEuJYkViNrUavQ,,,N,0,0,,,2014-04-05 12:27,2014-04-05 13:21,admin,admin,
1835,141578,1749,35975,642,0,N,N,N,CP_Drtn,TT_Task,DT_FixedDUR2,TK_NotStart,PROCMEPELE6040,Preparation & Submission of MDBs,,1864,0,192,0,0,0,192,24,0,24,,,,2014-11-24 08:00,2014-12-21 16:00,,2014-02-01 08:00,2014-02-27 16:00,2014-02-01 08:00,2014-02-27 16:00,2014-02-01 08:00,2014-02-27 16:00,2014-11-24 08:00,2014-12-21 16:00,,PT_Normal,,,,,PvQ/0aZnlkCQ6ejRYa9JDA,GngtstzJV0mGzw3CT3tO5w,,,N,0,0,,,2014-04-05 12:27,2014-04-05 13:21,admin,admin,
1836,141579,1749,35975,642,0,N,N,N,CP_Drtn,TT_Task,DT_FixedDUR2,TK_NotStart,PROCMEPELE6850,Review & Approval of MDBs,,1864,1152,96,0,0,0,96,12,0,12,,,,2014-12-22 08:00,2015-01-06 16:00,,2014-03-01 08:00,2014-03-13 16:00,2014-03-01 08:00,2014-03-13 16:00,2014-03-01 08:00,2014-03-13 16:00,2014-12-22 08:00,2015-01-06 16:00,,PT_Normal,,,,,E8ZZonj3VUadyXdRkxDhng,iHVUWYETkki5tR94CaxE/Q,,,N,0,0,,,2014-04-05 12:27,2014-04-05 13:21,admin,admin,
1837,141580,1749,35975,642,0,N,N,N,CP_Drtn,TT_Task,DT_FixedDUR2,TK_NotStart,PROCMEPELE8470,Issue Purchase Order of MDBs,,712,0,96,0,0,0,96,12,0,12,,,,2015-01-07 08:00,2015-01-20 16:00,,2014-09-15 08:00,2014-09-28 16:00,2014-09-15 08:00,2014-09-28 16:00,2014-09-15 08:00,2014-09-28 16:00,2015-01-07 08:00,2015-01-20 16:00,,PT_Normal,,,,,nnWBh4omfUSqD0ULaCP9Rw,+aCpc8SGQkWqbTl2nkvhWw,,,N,0,0,,,2014-04-05 12:27,2014-04-05 13:21,admin,admin,
1838,141581,1749,35975,642,0,N,N,N,CP_Drtn,TT_Task,DT_FixedDUR2,TK_NotStart,PROCMEPELE8740,Manufacturing & Shipping of MDBs,,712,0,768,0,0,0,768,96,0,96,,,,2015-01-21 08:00,2015-05-12 16:00,,2014-09-29 08:00,2015-01-28 16:00,2014-09-29 08:00,2015-01-28 16:00,2014-09-29 08:00,2015-01-28 16:00,2015-01-21 08:00,2015-05-12 16:00,,PT_Normal,,,,,3+18DbHiR0WwSoEgbnw2Mw,Gqw8rtpF4kCgpAJQ9aCpcw,,,N,0,0,,,2014-04-05 12:27,2014-04-05 13:21,admin,admin,
1839,141582,1749,35975,642,0,N,N,N,CP_Drtn,TT_Task,DT_FixedDUR2,TK_NotStart,PROCMEPELE9190,Clearance & Delivery to Site of MDBs,,712,0,224,0,0,0,224,28,0,28,,,,2015-05-13 08:00,2015-06-12 16:00,,2015-01-29 08:00,2015-03-02 16:00,2015-01-29 08:00,2015-03-02 16:00,2015-01-29 08:00,2015-03-02 16:00,2015-05-13 08:00,2015-06-12 16:00,,PT_Normal,,,,,qj3aJ5wKPk6PkvJdCSumcQ,HU4Fb6TqI0Gc/hM4BDtsJA,,,N,0,0,,,2014-04-05 12:27,2014-04-05 13:21,admin,admin,
1840,141583,1749,36002,642,0,N,N,N,CP_Drtn,TT_Task,DT_FixedDUR2,TK_NotStart,PROCMEPELE5770,Preparation & Submission of BMS System,,1088,0,240,0,0,0,240,30,0,30,,,,2014-12-21 08:00,2015-01-26 16:00,,2014-06-23 08:00,2014-08-10 16:00,2014-06-23 08:00,2014-08-10 16:00,2014-06-23 08:00,2014-08-10 16:00,2014-12-21 08:00,2015-01-26 16:00,,PT_Normal,,,,,TJ/hyPxnsECDESZO7FBYNA,f6023Q0GbkGuAmFeLJvn3A,,,N,0,0,,,2014-04-05 12:27,2014-04-05 13:21,admin,admin,
1841,141584,1749,36002,642,0,N,N,N,CP_Drtn,TT_Task,DT_FixedDUR2,TK_NotStart,PROCMEPELE7750,Issue Purchase Order of BMS System,,1088,0,96,0,0,0,96,12,0,12,,,,2015-02-10 08:00,2015-02-23 16:00,,2014-08-25 08:00,2014-09-07 16:00,2014-08-25 08:00,2014-09-07 16:00,2014-08-25 08:00,2014-09-07 16:00,2015-02-10 08:00,2015-02-23 16:00,,PT_Normal,,,,,Cq1i33ImIEy9xkNVOLK5gw,c0D+FlK3x0mTWqaO6EBF3A,,,N,0,0,,,2014-04-05 12:27,2014-04-05 13:21,admin,admin,
1842,141585,1749,36002,642,0,N,N,N,CP_Drtn,TT_Task,DT_FixedDUR2,TK_NotStart,PROCMEPELE8110,Manufacturing & Shipping of BMS System,,1088,0,576,0,0,0,576,72,0,72,,,,2015-02-24 08:00,2015-05-18 16:00,,2014-09-08 08:00,2014-12-08 16:00,2014-09-08 08:00,2014-12-08 16:00,2014-09-08 08:00,2014-12-08 16:00,2015-02-24 08:00,2015-05-18 16:00,,PT_Normal,,,,,oeZXlKKhUU6GZVhfhvPqNg,IjTUJn0tS0OG1KMABf+3yQ,,,N,0,0,,,2014-04-05 12:27,2014-04-05 13:21,admin,admin,
1843,141586,1749,36002,642,0,N,N,N,CP_Drtn,TT_Task,DT_FixedDUR2,TK_NotStart,PROCMEPELE9100,Clearance & Delivery to Site of BMS System,,1088,0,96,0,0,0,96,12,0,12,,,,2015-05-19 08:00,2015-06-01 16:00,,2014-12-09 08:00,2014-12-22 16:00,2014-12-09 08:00,2014-12-22 16:00,2014-12-09 08:00,2014-12-22 16:00,2015-05-19 08:00,2015-06-01 16:00,,PT_Normal,,,,,1Ik9nnfoxkePs8a/pv3pLg,t1iO1KViPUWcZRfCIT392g,,,N,0,0,,,2014-04-05 12:27,2014-04-05 13:21,admin,admin,
1844,141587,1749,36002,642,0,N,N,N,CP_Drtn,TT_Task,DT_FixedDUR2,TK_NotStart,PROCMEPELE7120,Review & Approval of BMS System,,1088,0,96,0,0,0,96,12,0,12,,,,2015-01-27 08:00,2015-02-09 16:00,,2014-08-11 08:00,2014-08-24 16:00,2014-08-11 08:00,2014-08-24 16:00,2014-08-11 08:00,2014-08-24 16:00,2015-01-27 08:00,2015-02-09 16:00,,PT_Normal,,,,,X0NK2PlnuEWC8q/Zz0PPSw,DlNDueJqx0mgm4tZsxPxHw,,,N,0,0,,,2014-04-05 12:27,2014-04-05 13:21,admin,admin,
1845,141588,1749,36021,642,0,N,N,N,CP_Drtn,TT_Task,DT_FixedDUR2,TK_NotStart,PROCMEPELE5950,Preparation & Submission of Distribution Board,,1984,0,240,0,0,0,240,30,0,30,,,,2014-12-11 08:00,2015-01-17 16:00,,2014-02-01 08:00,2014-03-06 16:00,2014-02-01 08:00,2014-03-06 16:00,2014-02-01 08:00,2014-03-06 16:00,2014-12-11 08:00,2015-01-17 16:00,,PT_Normal,,,,,4VpXyzs3XE+Ffq9jSQW+kQ,6WkFWt0cnEyowt/I63LrLA,,,N,0,0,,,2014-04-05 12:27,2014-04-05 13:21,admin,admin,
1846,141589,1749,36021,642,0,N,N,N,CP_Drtn,TT_Task,DT_FixedDUR2,TK_NotStart,PROCMEPELE7300,Review & Approval of Distribution Board,,1984,0,96,0,0,0,96,12,0,12,,,,2015-01-18 08:00,2015-01-31 16:00,,2014-03-08 08:00,2014-03-20 16:00,2014-03-08 08:00,2014-03-20 16:00,2014-03-08 08:00,2014-03-20 16:00,2015-01-18 08:00,2015-01-31 16:00,,PT_Normal,,,,,eoclUAsysE6+W1+7lfkdRQ,/hAXa2UHDkiIT27Xd0ShnA,,,N,0,0,,,2014-04-05 12:27,2014-04-05 13:21,admin,admin,
1847,141590,1749,36021,642,0,N,N,N,CP_Drtn,TT_Task,DT_FixedDUR2,TK_NotStart,PROCMEPELE7930,Issue Purchase Order of Distribution Board,,1984,0,96,0,0,0,96,12,0,12,,,,2015-02-01 08:00,2015-02-14 16:00,,2014-03-22 08:00,2014-04-03 16:00,2014-03-22 08:00,2014-04-03 16:00,2014-03-22 08:00,2014-04-03 16:00,2015-02-01 08:00,2015-02-14 16:00,,PT_Normal,,,,,C7hQX3SeV0m44yQ2mqhpwA,5vsPin+42U2jBkfk1oADIQ,,,N,0,0,,,2014-04-05 12:27,2014-04-05 13:21,admin,admin,
1848,141591,1749,36021,642,0,N,N,N,CP_Drtn,TT_Task,DT_FixedDUR2,TK_NotStart,PROCMEPELE8290,Manufacturing & Shipping of Distribution Board,,1984,0,480,0,0,0,480,60,0,60,,,,2015-02-15 08:00,2015-04-25 16:00,,2014-04-05 08:00,2014-06-14 16:00,2014-04-05 08:00,2014-06-14 16:00,2014-04-05 08:00,2014-06-14 16:00,2015-02-15 08:00,2015-04-25 16:00,,PT_Normal,,,,,ZYRLwXasmU2b+Kag4OumJA,aadt3kPyrkGfnxbxu/uEzw,,,N,0,0,,,2014-04-05 12:27,2014-04-05 13:21,admin,admin,
1849,141592,1749,36021,642,0,N,N,N,CP_Drtn,TT_Task,DT_FixedDUR2,TK_NotStart,PROCMEPELE8920,Clearance & Delivery to Site of Distribution Board,,1984,352,224,0,0,0,224,28,0,28,,,,2015-04-26 08:00,2015-05-27 16:00,,2014-06-15 08:00,2014-07-31 16:00,2014-06-15 08:00,2014-07-31 16:00,2014-06-15 08:00,2014-07-31 16:00,2015-04-26 08:00,2015-05-27 16:00,,PT_Normal,,,,,xI2U1gf4dkGrhlyl1dlvtQ,ftBKK1hYOkCsVsgx8K+83Q,,,N,0,0,,,2014-04-05 12:27,2014-04-05 13:21,admin,admin,
1850,141593,1749,35964,642,0,N,N,N,CP_Drtn,TT_Task,DT_FixedDUR2,TK_NotStart,PROCMEPELE4780,Issue Purchase Order of Isolators,,2616,0,96,0,0,0,96,12,0,12,,,,2015-03-16 08:00,2015-03-29 16:00,,2014-02-01 08:00,2014-02-13 16:00,2014-02-01 08:00,2014-02-13 16:00,2014-02-01 08:00,2014-02-13 16:00,2015-03-16 08:00,2015-03-29 16:00,,PT_Normal,,,,,s7d/57fEGEedNH+i2s6vQg,xlPl6IQArUGEq0PEDikghQ,,,N,0,0,,,2014-04-05 12:27,2014-04-05 13:21,admin,admin,
1851,141594,1749,35964,642,0,N,N,N,CP_Drtn,TT_Task,DT_FixedDUR2,TK_NotStart,PROCMEPELE5230,Manufacturing & Shipping of Isolators,,2616,0,384,0,0,0,384,48,0,48,,,,2015-03-30 08:00,2015-05-24 16:00,,2014-02-15 08:00,2014-04-10 16:00,2014-02-15 08:00,2014-04-10 16:00,2014-02-15 08:00,2014-04-10 16:00,2015-03-30 08:00,2015-05-24 16:00,,PT_Normal,,,,,PyYTISd++0uIvOChxrdnkQ,gbCl+BQ/AUyGJk2zXNfSKQ,,,N,0,0,,,2014-04-05 12:27,2014-04-05 13:21,admin,admin,
1852,141595,1749,35964,642,0,N,N,N,CP_Drtn,TT_Task,DT_FixedDUR2,TK_NotStart,PROCMEPELE7660,Clearance & Delivery to Site of Isolators,,2616,1280,96,0,0,0,96,12,0,12,,,,2015-05-25 08:00,2015-06-06 16:00,,2014-04-12 08:00,2014-04-24 16:00,2014-04-12 08:00,2014-04-24 16:00,2014-04-12 08:00,2014-04-24 16:00,2015-05-25 08:00,2015-06-06 16:00,,PT_Normal,,,,,wx3YP7yN4U+hcnqwu0vo6Q,Os18p1EkCUy7ViBuv1Kzow,,,N,0,0,,,2014-04-05 12:27,2014-04-05 13:21,admin,admin,
1853,141596,1749,35965,642,0,N,N,N,CP_Drtn,TT_Task,DT_FixedDUR2,TK_NotStart,PROCMEPELE8020,Issue Purchase Order of Transformers,,2648,0,96,0,0,0,96,12,0,12,,,,2015-05-09 08:00,2015-05-21 16:00,,2014-03-22 08:00,2014-04-03 16:00,2014-03-22 08:00,2014-04-03 16:00,2014-03-22 08:00,2014-04-03 16:00,2015-05-09 08:00,2015-05-21 16:00,,PT_Normal,,,,,hED5WP8+VEqAfdUbOFF4pA,ZqEF+hXIdUmR6DuYfYHJMQ,,,N,0,0,,,2014-04-05 12:27,2014-04-05 13:21,admin,admin,
1854,141597,1749,35965,642,0,N,N,N,CP_Drtn,TT_Task,DT_FixedDUR2,TK_NotStart,PROCMEPELE8380,Manufacturing & Shipping of Transformers,,2648,0,960,0,0,0,960,120,0,120,,,,2015-05-23 08:00,2015-09-20 16:00,,2014-04-05 08:00,2014-09-07 16:00,2014-04-05 08:00,2014-09-07 16:00,2014-04-05 08:00,2014-09-07 16:00,2015-05-23 08:00,2015-09-20 16:00,,PT_Normal,,,,,Tm/OZbJI4UOq/7ndqM2moA,2Q0Jg/YXo0WvvcfVphPtfg,,,N,0,0,,,2014-04-05 12:27,2014-04-05 13:21,admin,admin,
1855,141598,1749,35965,642,0,N,N,N,CP_Drtn,TT_Task,DT_FixedDUR2,TK_NotStart,PROCMEPELE9280,Clearance & Delivery to Site of Transformers,,2648,2164,224,0,0,0,224,28,0,28,,,,2015-09-21 08:00,2015-10-18 16:00,,2014-09-08 08:00,2014-10-14 16:00,2014-09-08 08:00,2014-10-14 16:00,2014-09-08 08:00,2014-10-14 16:00,2015-09-21 08:00,2015-10-18 16:00,,PT_Normal,,,,,aoNi2o4XP0SJ2qMqsWMCpQ,NkoWJOvQDEWC6WmHtUAKgA,,,N,0,0,,,2014-04-05 12:27,2014-04-05 13:21,admin,admin,
1856,141599,1749,35965,642,0,N,N,N,CP_Drtn,TT_Task,DT_FixedDUR2,TK_NotStart,PROCMEPELE7390,Review & Approval of Transformers,,2648,0,96,0,0,0,96,12,0,12,,,,2015-04-25 08:00,2015-05-07 16:00,,2014-03-08 08:00,2014-03-20 16:00,2014-03-08 08:00,2014-03-20 16:00,2014-03-08 08:00,2014-03-20 16:00,2015-04-25 08:00,2015-05-07 16:00,,PT_Normal,,,,,idVaUzK98E+S+F5lwdy7qA,sWNjaOeXxEGM61849Np1rQ,,,N,0,0,,,2014-04-05 12:27,2014-04-05 13:21,admin,admin,
1857,141600,1749,35965,642,0,N,N,N,CP_Drtn,TT_Task,DT_FixedDUR2,TK_NotStart,PROCMEPELE6130,Preparation & Submission of Transformers,,2648,0,240,0,0,0,240,30,0,30,,,,2015-03-21 08:00,2015-04-23 16:00,,2014-02-01 08:00,2014-03-06 16:00,2014-02-01 08:00,2014-03-06 16:00,2014-02-01 08:00,2014-03-06 16:00,2015-03-21 08:00,2015-04-23 16:00,,PT_Normal,,,,,eyo/2LLa+0S7d1cv6v9n4A,WYQh2uk+w0OjzFAmAh9gsA,,,N,0,0,,,2014-04-05 12:27,2014-04-05 13:21,admin,admin,
1858,141601,1749,35966,642,0,N,N,N,CP_Drtn,TT_Task,DT_FixedDUR2,TK_NotStart,PROCMEPELE4870,Issue Purchase Order of Flexible Conduit,,1716,0,96,0,0,0,96,12,0,12,,,,2015-02-05 12:00,2015-02-19 12:00,,2014-05-06 08:00,2014-05-19 16:00,2014-05-06 08:00,2014-05-19 16:00,2014-05-06 08:00,2014-05-19 16:00,2015-02-05 12:00,2015-02-19 12:00,,PT_Normal,,,,,stEFo7/ky0GdUEVqR09VHA,CgnT+UrbGkKB0JZA44Qf0A,,,N,0,0,,,2014-04-05 12:27,2014-04-05 13:21,admin,admin,
1859,141602,1749,35966,642,0,N,N,N,CP_Drtn,TT_Task,DT_FixedDUR2,TK_NotStart,PROCMEPELE5320,Manufacturing & Shipping of Flexible Conduit,,1716,0,480,0,0,0,480,60,0,60,,,,2015-02-19 12:00,2015-04-30 12:00,,2014-05-20 08:00,2014-08-12 16:00,2014-05-20 08:00,2014-08-12 16:00,2014-05-20 08:00,2014-08-12 16:00,2015-02-19 12:00,2015-04-30 12:00,,PT_Normal,,,,,4jRG5oOtNUSPolv4wDtvZA,DrKMRwfUnEqM4JkIChQBeA,,,N,0,0,,,2014-04-05 12:27,2014-04-05 13:21,admin,admin,
1860,141603,1749,35966,642,0,N,N,N,CP_Drtn,TT_Task,DT_FixedDUR2,TK_NotStart,PROCMEPELE6940,Clearance & Delivery to Site of Flexible Conduit,,1716,200,96,0,0,0,96,12,0,12,,,,2015-04-30 12:00,2015-05-14 12:00,,2014-08-13 08:00,2014-08-26 16:00,2014-08-13 08:00,2014-08-26 16:00,2014-08-13 08:00,2014-08-26 16:00,2015-04-30 12:00,2015-05-14 12:00,,PT_Normal,,,,,2EUumv/7TE+fnLZ0U85f9A,UMdOBxmBSEKa3WjUCXMc1A,,,N,0,0,,,2014-04-05 12:27,2014-04-05 13:21,admin,admin,
1861,141604,1749,36045,1447,0,N,N,N,CP_Drtn,TT_Task,DT_FixedDUR2,TK_NotStart,PROCMEPELE2800,Preparation & Submission of Light Fittings,,2236,2,240,0,0,0,240,30,0,30,,,,2015-03-07 12:00,2015-04-06 12:00,,2014-06-01 08:00,2014-06-30 16:00,2014-06-01 08:00,2014-06-30 16:00,2014-06-01 08:00,2014-06-30 16:00,2015-03-07 12:00,2015-04-06 12:00,,PT_Normal,,,,,GNhEvjLtYEmK+af41mVdkw,j1bXSWt4kUGCPQdbqvjEkg,,,N,0,0,,,2014-04-05 12:27,2014-04-05 13:21,admin,admin,
1862,141605,1749,36045,642,0,N,N,N,CP_Drtn,TT_Task,DT_FixedDUR2,TK_NotStart,PROCMEPELE4420,Review & Approval of Light Fittings,,1748,0,96,0,0,0,96,12,0,12,,,,2015-04-06 12:00,2015-04-20 12:00,,2014-07-01 10:00,2014-07-24 14:00,2014-07-01 10:00,2014-07-24 14:00,2014-07-01 10:00,2014-07-24 14:00,2015-04-06 12:00,2015-04-20 12:00,,PT_Normal,,,,,SB7WzXttEUSbgcmX35e6ew,RMZssvmtrE6sdpPTqG2i6A,,,N,0,0,,,2014-04-05 12:27,2014-04-05 13:21,admin,admin,
1863,141606,1749,36045,642,0,N,N,N,CP_Drtn,TT_Task,DT_FixedDUR2,TK_NotStart,PROCMEPELE5050,Issue Purchase Order of Light Fittings,,1748,0,96,0,0,0,96,12,0,12,,,,2015-04-20 12:00,2015-05-04 12:00,,2014-07-25 10:00,2014-08-11 16:00,2014-07-25 10:00,2014-08-11 16:00,2014-07-25 10:00,2014-08-11 16:00,2015-04-20 12:00,2015-05-04 12:00,,PT_Normal,,,,,woOkSlWbMEuPPqcSfS5hxg,CeTo3VaxsUuOMr3Tca0ibw,,,N,0,0,,,2014-04-05 12:27,2014-04-05 13:21,admin,admin,
1864,141607,1749,36045,1447,0,N,N,N,CP_Drtn,TT_Task,DT_FixedDUR2,TK_NotStart,PROCMEPELE5500,Manufacturing & Shipping of Light Fittings,,2124,0,576,0,0,0,576,72,0,72,,,,2015-05-04 12:00,2015-07-15 12:00,,2014-08-12 08:00,2014-10-22 16:00,2014-08-12 08:00,2014-10-22 16:00,2014-08-12 08:00,2014-10-22 16:00,2015-05-04 12:00,2015-07-15 12:00,,PT_Normal,,,,,NJg2td+Zp0qDJJA4wijMQA,mDRhwZdgFUGcZOsUfqHi8A,,,N,0,0,,,2014-04-05 12:27,2014-04-05 13:21,admin,admin,
1865,141608,1749,36045,642,0,N,N,N,CP_Drtn,TT_Task,DT_FixedDUR2,TK_NotStart,PROCMEPELE8560,Clearance & Delivery to Site of Light Fittings,,1828,72,96,0,0,0,96,12,0,12,,,,2015-07-15 12:00,2015-07-27 12:00,,2014-10-23 08:00,2014-11-09 16:00,2014-10-23 08:00,2014-11-09 16:00,2014-10-23 08:00,2014-11-09 16:00,2015-07-15 12:00,2015-07-27 12:00,,PT_Normal,,,,,J4FlXiS1n0eJaqUF6I7Viw,BD9hseWD+0KcJ/hhIOTqMg,,,N,0,0,,,2014-04-05 12:27,2014-04-05 13:21,admin,admin,
1866,141609,1749,35959,642,0,N,N,N,CP_Drtn,TT_Task,DT_FixedDUR2,TK_NotStart,PROCMEPELE1450,Issue Purchase Order of Earthing & Lightning Protection System,,160,0,40,0,0,0,40,5,0,5,,,,2014-02-24 08:00,2014-03-01 16:00,,2014-02-01 08:00,2014-02-05 16:00,2014-02-01 08:00,2014-02-05 16:00,2014-02-01 08:00,2014-02-05 16:00,2014-02-24 08:00,2014-03-01 16:00,,PT_Normal,,,,,DOBP674N/UqFiXBmn1fIpA,TcXcBmaP1ECkOzWsdvF7BA,,,N,0,0,,,2014-04-05 12:27,2014-04-05 13:21,admin,admin,
1867,141610,1749,35959,642,0,N,N,N,CP_Drtn,TT_Task,DT_FixedDUR2,TK_NotStart,PROCMEPELE1630,Manufacturing & Shipping of Earthing & Lightning Protection System,,160,0,120,0,0,0,120,15,0,15,,,,2014-03-02 08:00,2014-03-18 16:00,,2014-02-06 08:00,2014-02-23 16:00,2014-02-06 08:00,2014-02-23 16:00,2014-02-06 08:00,2014-02-23 16:00,2014-03-02 08:00,2014-03-18 16:00,,PT_Normal,,,,,/H0ML1C6sE+dU+bmkUJoXQ,v71AEDh1uUW7D2UfzMeTNQ,,,N,0,0,,,2014-04-05 12:27,2014-04-05 13:21,admin,admin,
1868,141611,1749,35959,642,0,N,N,N,CP_Drtn,TT_Task,DT_FixedDUR2,TK_NotStart,PROCMEPELE1810,Clearance & Delivery to Site of Earthing & Lightning Protection System,,160,160,48,0,0,0,48,6,0,6,,,,2014-03-19 08:00,2014-03-25 16:00,,2014-02-24 08:00,2014-03-02 16:00,2014-02-24 08:00,2014-03-02 16:00,2014-02-24 08:00,2014-03-02 16:00,2014-03-19 08:00,2014-03-25 16:00,,PT_Normal,,,,,Plc2keOsuk+XLKnyoN9UBA,cxuqetNqhka7ZDclLW52YA,,,N,0,0,,,2014-04-05 12:27,2014-04-05 13:21,admin,admin,
1869,141612,1749,35969,642,0,N,N,N,CP_Drtn,TT_Task,DT_FixedDUR2,TK_NotStart,PROCMEPELE9490,Preparation & Submission of Generator (Including Fuel Tank ),,736,0,240,0,0,0,240,30,0,30,,,,2015-05-14 12:00,2015-06-16 12:00,,2015-01-27 12:00,2015-03-03 12:00,2015-01-27 12:00,2015-03-03 12:00,2015-01-27 12:00,2015-03-03 12:00,2015-05-14 12:00,2015-06-16 12:00,CS_ALAP,PT_Normal,,,,,gfORBDrJfUauB20xrIvYbA,ftaQM+rwdESUfhnKx1YcoA,,,N,0,0,,,2014-04-05 12:27,2014-04-05 13:21,admin,admin,
1870,141613,1749,35969,642,0,N,N,N,CP_Drtn,TT_Task,DT_FixedDUR2,TK_NotStart,PROCMEPELE9500,Review & Approval of Generator (Including Fuel Tank ),,736,0,96,0,0,0,96,12,0,12,,,,2015-06-16 12:00,2015-06-28 12:00,,2015-03-03 12:00,2015-03-17 12:00,2015-03-03 12:00,2015-03-17 12:00,2015-03-03 12:00,2015-03-17 12:00,2015-06-16 12:00,2015-06-28 12:00,CS_ALAP,PT_Normal,,,,,PDnZm9x2ikOyfFX3pCMWgA,Ox/IewI5Y0K0BH5SMwYHZg,,,N,0,0,,,2014-04-05 12:27,2014-04-05 13:21,admin,admin,
1871,141614,1749,35969,642,0,N,N,N,CP_Drtn,TT_Task,DT_FixedDUR2,TK_NotStart,PROCMEPELE9510,Issue Purchase Order of Generator (Including Fuel Tank ),,736,0,96,0,0,0,96,12,0,12,,,,2015-06-28 12:00,2015-07-10 12:00,,2015-03-17 12:00,2015-03-31 12:00,2015-03-17 12:00,2015-03-31 12:00,2015-03-17 12:00,2015-03-31 12:00,2015-06-28 12:00,2015-07-10 12:00,CS_ALAP,PT_Normal,,,,,FpeTXPlQpUGhsj5QqxPKrw,v6K9btaHRkCrCcOy6wQkhg,,,N,0,0,,,2014-04-05 12:27,2014-04-05 13:21,admin,admin,
1872,141615,1749,35969,642,0,N,N,N,CP_Drtn,TT_Task,DT_FixedDUR2,TK_NotStart,PROCMEPELE9520,Manufacturing & Shipping of Generator (Including Fuel Tank ),,736,0,960,0,0,0,960,120,0,120,,,,2015-07-10 12:00,2015-11-07 12:00,,2015-03-31 12:00,2015-08-07 12:00,2015-03-31 12:00,2015-08-07 12:00,2015-03-31 12:00,2015-08-07 12:00,2015-07-10 12:00,2015-11-07 12:00,CS_ALAP,PT_Normal,,,,,RKt+f5s+TUyQsRKpf3B3TQ,uDjc43fGP06qaTc37xadtw,,,N,0,0,,,2014-04-05 12:27,2014-04-05 13:21,admin,admin,
1873,141616,1749,35969,642,0,N,N,N,CP_Drtn,TT_Task,DT_FixedDUR2,TK_NotStart,PROCMEPELE9530,Clearance & Delivery to Site of Generator (Including Fuel Tank ),,736,0,96,0,0,0,96,12,0,12,,,,2015-11-07 12:00,2015-11-19 12:00,,2015-08-07 12:00,2015-08-19 12:00,2015-08-07 12:00,2015-08-19 12:00,2015-08-07 12:00,2015-08-19 12:00,2015-11-07 12:00,2015-11-19 12:00,CS_ALAP,PT_Normal,,,,,+Oko1oLTGUeqP0rQnAJEXA,mR/ztZs1UEqfu4vR1D/+2g,,,N,0,0,,,2014-04-05 12:27,2014-04-05 13:21,admin,admin,
1874,141617,1749,35940,642,0,N,N,N,CP_Drtn,TT_Task,DT_FixedDUR2,TK_NotStart,PROCMEPELE9290,Preparation & Submission of Emergency Lighting,,1568,0,240,0,0,0,240,30,0,30,,,,2014-10-04 10:00,2014-11-15 16:00,,2014-02-01 08:00,2014-03-06 16:00,2014-02-01 08:00,2014-03-06 16:00,2014-02-01 08:00,2014-03-06 16:00,2014-10-04 10:00,2014-11-15 16:00,,PT_Normal,,,,,8M8Qv1SDIkWMMH7vGDUjng,cVj9sA2HSEG45e8e0svbzQ,,,N,0,0,,,2014-04-05 12:27,2014-04-05 13:21,admin,admin,
1875,141618,1749,35940,642,0,N,N,N,CP_Drtn,TT_Task,DT_FixedDUR2,TK_NotStart,PROCMEPELE9300,Review & Approval of Emergency Lighting,,1568,0,96,0,0,0,96,12,0,12,,,,2014-11-16 08:00,2014-11-29 16:00,,2014-03-08 08:00,2014-03-20 16:00,2014-03-08 08:00,2014-03-20 16:00,2014-03-08 08:00,2014-03-20 16:00,2014-11-16 08:00,2014-11-29 16:00,,PT_Normal,,,,,PwtitH/5MkGage0Ms4D4jA,Mslbe6Mj10+08ppEjpOF0g,,,N,0,0,,,2014-04-05 12:27,2014-04-05 13:21,admin,admin,
1876,141619,1749,35940,642,0,N,N,N,CP_Drtn,TT_Task,DT_FixedDUR2,TK_NotStart,PROCMEPELE9310,Issue Purchase Order of Emergency Lighting,,1568,0,96,0,0,0,96,12,0,12,,,,2015-02-10 08:00,2015-02-23 16:00,,2014-06-01 08:00,2014-06-14 16:00,2014-06-01 08:00,2014-06-14 16:00,2014-06-01 08:00,2014-06-14 16:00,2015-02-10 08:00,2015-02-23 16:00,,PT_Normal,,,,,umt0Qp0qK0SkSldOr28G9w,dKmU4WI8zkmOxIbVYuzRog,,,N,0,0,,,2014-04-05 12:27,2014-04-05 13:21,admin,admin,
1877,141620,1749,35940,642,0,N,N,N,CP_Drtn,TT_Task,DT_FixedDUR2,TK_NotStart,PROCMEPELE9320,Manufacturing & Shipping of Emergency Lighting,,1568,0,576,0,0,0,576,72,0,72,,,,2015-02-24 08:00,2015-05-18 16:00,,2014-06-15 08:00,2014-09-21 16:00,2014-06-15 08:00,2014-09-21 16:00,2014-06-15 08:00,2014-09-21 16:00,2015-02-24 08:00,2015-05-18 16:00,,PT_Normal,,,,,bvwJAuXY4UqXKTBpCiXvdw,nHNfKxFHoUaiStUXJv98OA,,,N,0,0,,,2014-04-05 12:27,2014-04-05 13:21,admin,admin,
1878,141621,1749,35940,642,0,N,N,N,CP_Drtn,TT_Task,DT_FixedDUR2,TK_NotStart,PROCMEPELE9330,Clearance & Delivery to Site of Emergency Lighting,,1568,152,96,0,0,0,96,12,0,12,,,,2015-05-19 08:00,2015-06-01 16:00,,2014-09-22 08:00,2014-10-09 14:00,2014-09-22 08:00,2014-10-09 14:00,2014-09-22 08:00,2014-10-09 14:00,2015-05-19 08:00,2015-06-01 16:00,,PT_Normal,,,,,5FP59ps3sUy90qBa4DtNPQ,boOKqcSVvkeViYU7ck4IUw,,,N,0,0,,,2014-04-05 12:27,2014-04-05 13:21,admin,admin,
1879,141622,1749,35990,642,0,N,N,N,CP_Drtn,TT_Task,DT_FixedDUR2,TK_NotStart,PROCMEPELE2530,Preparation & Submission of Intrusion Alarm System,,1580,0,192,0,0,0,192,24,0,24,,,,2015-03-04 12:00,2015-04-01 12:00,,2014-06-23 08:00,2014-08-03 16:00,2014-06-23 08:00,2014-08-03 16:00,2014-06-23 08:00,2014-08-03 16:00,2015-03-04 12:00,2015-04-01 12:00,,PT_Normal,,,,,FYF+GhFOVE+Nx6PnJPR0wg,KxEZexCD/UmREtESwhM9vg,,,N,0,0,,,2014-04-05 12:27,2014-04-05 13:21,admin,admin,
1880,141623,1749,35990,642,0,N,N,N,CP_Drtn,TT_Task,DT_FixedDUR2,TK_NotStart,PROCMEPELE3070,Review & Approval of Intrusion Alarm System,,1580,512,96,0,0,0,96,12,0,12,,,,2015-04-01 12:00,2015-04-15 12:00,,2014-08-04 08:00,2014-08-17 16:00,2014-08-04 08:00,2014-08-17 16:00,2014-08-04 08:00,2014-08-17 16:00,2015-04-01 12:00,2015-04-15 12:00,,PT_Normal,,,,,ICXlu5el+EqcT3moDOfW6w,kyp7/oN6+02z1Dgjj6UAYg,,,N,0,0,,,2014-04-05 12:27,2014-04-05 13:21,admin,admin,
1881,141624,1749,35990,642,0,N,N,N,CP_Drtn,TT_Task,DT_FixedDUR2,TK_NotStart,PROCMEPELE3880,Issue Purchase Order of Intrusion Alarm System,,1068,0,96,0,0,0,96,12,0,12,,,,2015-04-15 12:00,2015-04-29 12:00,,2014-11-09 08:00,2014-11-22 16:00,2014-11-09 08:00,2014-11-22 16:00,2014-11-09 08:00,2014-11-22 16:00,2015-04-15 12:00,2015-04-29 12:00,,PT_Normal,,,,,Bir9IjPhp0uHZE8dRXG7NQ,hWcHOmW030aUROWb3tNPNA,,,N,0,0,,,2014-04-05 12:27,2014-04-05 13:21,admin,admin,
1882,141625,1749,35990,642,0,N,N,N,CP_Drtn,TT_Task,DT_FixedDUR2,TK_NotStart,PROCMEPELE4600,Manufacturing & Shipping of Intrusion Alarm System,,1068,0,720,0,0,0,720,90,0,90,,,,2015-04-29 12:00,2015-08-02 12:00,,2014-11-23 08:00,2015-03-09 16:00,2014-11-23 08:00,2015-03-09 16:00,2014-11-23 08:00,2015-03-09 16:00,2015-04-29 12:00,2015-08-02 12:00,,PT_Normal,,,,,r4ywOAmao0CJ8WJkj9EBew,3/7AHUWU5E2aDM5oFwPYdA,,,N,0,0,,,2014-04-05 12:27,2014-04-05 13:21,admin,admin,
1883,141626,1749,35990,642,0,N,N,N,CP_Drtn,TT_Task,DT_FixedDUR2,TK_NotStart,PROCMEPELE7480,Clearance & Delivery to Site - Devices of Intrusion Alarm System,,1068,48,96,0,0,0,96,12,0,12,,,,2015-08-02 12:00,2015-08-14 12:00,,2015-03-10 08:00,2015-03-23 16:00,2015-03-10 08:00,2015-03-23 16:00,2015-03-10 08:00,2015-03-23 16:00,2015-08-02 12:00,2015-08-14 12:00,,PT_Normal,,,,,WtHhb/YZekyYl30R3+1osg,igPgOR3/tkSk/5sXSW9xsQ,,,N,0,0,,,2014-04-05 12:27,2014-04-05 13:21,admin,admin,
1884,141627,1749,35990,642,0,N,N,N,CP_Drtn,TT_Task,DT_FixedDUR2,TK_NotStart,PROCMEPELE6400,Clearance & Delivery to Site - Wires of Intrusion Alarm System,,1180,0,96,0,0,0,96,12,0,12,,,,2015-06-17 12:00,2015-06-29 12:00,,2014-12-28 08:00,2015-01-12 16:00,2014-12-28 08:00,2015-01-12 16:00,2014-12-28 08:00,2015-01-12 16:00,2015-06-17 12:00,2015-06-29 12:00,,PT_Normal,,,,,KKpcplsRBky5G/shjYkS+Q,7MGdbHoifEGV/jbeT1S5qg,,,N,0,0,,,2014-04-05 12:27,2014-04-05 13:21,admin,admin,
1885,141628,1749,36029,642,0,N,N,N,CP_Drtn,TT_Task,DT_FixedDUR2,TK_NotStart,PROCMEPELE3790,Preparation & Submission of Fire Alarm  System,,1200,0,192,0,0,0,192,24,0,24,,,,2014-08-11 08:00,2014-09-07 16:00,,2014-02-01 08:00,2014-02-27 16:00,2014-02-01 08:00,2014-02-27 16:00,2014-02-01 08:00,2014-02-27 16:00,2014-08-11 08:00,2014-09-07 16:00,,PT_Normal,,,,,31FXZSValkCIGYKc1cy07Q,YC4ncX0CJECAyLtKgbLTIQ,,,N,0,0,,,2014-04-05 12:27,2014-04-05 13:21,admin,admin,
1886,141629,1749,36029,642,0,N,N,N,CP_Drtn,TT_Task,DT_FixedDUR2,TK_NotStart,PROCMEPELE5140,Review & Approval of Fire Alarm  System,,1200,0,96,0,0,0,96,12,0,12,,,,2014-09-08 08:00,2014-09-21 16:00,,2014-03-01 08:00,2014-03-13 16:00,2014-03-01 08:00,2014-03-13 16:00,2014-03-01 08:00,2014-03-13 16:00,2014-09-08 08:00,2014-09-21 16:00,,PT_Normal,,,,,65Kc4UVJ9ESy/TVhBjg6ZQ,32iS9g1DH0e9pAYOHS1Gvg,,,N,0,0,,,2014-04-05 12:27,2014-04-05 13:21,admin,admin,
1887,141630,1749,36029,642,0,N,N,N,CP_Drtn,TT_Task,DT_FixedDUR2,TK_NotStart,PROCMEPELE5590,Issue Purchase Order of Fire Alarm  System,,1200,0,96,0,0,0,96,12,0,12,,,,2015-01-15 08:00,2015-01-28 16:00,,2014-06-30 08:00,2014-07-22 14:00,2014-06-30 08:00,2014-07-22 14:00,2014-06-30 08:00,2014-07-22 14:00,2015-01-15 08:00,2015-01-28 16:00,,PT_Normal,,,,,ET/Tsx82xEy0+/S/c+qIKw,n8No7q+rDky36nkNb3op9Q,,,N,0,0,,,2014-04-05 12:27,2014-04-05 13:21,admin,admin,
1888,141631,1749,36029,642,0,N,N,N,CP_Drtn,TT_Task,DT_FixedDUR2,TK_NotStart,PROCMEPELE6580,Manufacturing & Shipping of Fire Alarm  System,,1200,0,720,0,0,0,720,90,0,90,,,,2015-01-29 08:00,2015-05-13 16:00,,2014-07-23 10:00,2014-11-17 16:00,2014-07-23 10:00,2014-11-17 16:00,2014-07-23 10:00,2014-11-17 16:00,2015-01-29 08:00,2015-05-13 16:00,,PT_Normal,,,,,1vTcGTh7CEaMO1/KdKGLhw,4r0oElEPuEqkUyBv2FrTmA,,,N,0,0,,,2014-04-05 12:27,2014-04-05 13:21,admin,admin,
1889,141632,1749,36029,642,0,N,N,N,CP_Drtn,TT_Task,DT_FixedDUR2,TK_NotStart,PROCMEPELE8650,Clearance & Delivery to Site of Fire Alarm  System,,1200,0,96,0,0,0,96,12,0,12,,,,2015-05-14 08:00,2015-05-27 16:00,,2014-11-18 08:00,2014-12-01 16:00,2014-11-18 08:00,2014-12-01 16:00,2014-11-18 08:00,2014-12-01 16:00,2015-05-14 08:00,2015-05-27 16:00,,PT_Normal,,,,,K+z5NrqQS06OxvHvRNERkw,h+p4iEbU1EiwqjvNjNnXuQ,,,N,0,0,,,2014-04-05 12:27,2014-04-05 13:21,admin,admin,
1890,141633,1749,36000,642,0,N,N,N,CP_Drtn,TT_Task,DT_FixedDUR2,TK_NotStart,PROCMEPELE1000,Preparation & Submission of Lighting Control  System,,700,0,240,0,0,0,240,30,0,30,,,,2015-02-21 12:00,2015-03-28 12:00,,2014-11-09 08:00,2014-12-13 16:00,2014-11-09 08:00,2014-12-13 16:00,2014-11-09 08:00,2014-12-13 16:00,2015-02-21 12:00,2015-03-28 12:00,,PT_Normal,,,,,UVEmHqfO2kmhE/3Vfg2NZw,hsn7QSjvnUGiLff4HC4oCw,,,N,0,0,,,2014-04-05 12:28,2014-04-05 13:21,admin,admin,
1891,141634,1749,36000,642,0,N,N,N,CP_Drtn,TT_Task,DT_FixedDUR2,TK_NotStart,PROCMEPELE1720,Review & Approval of Lighting Control  System,,700,0,96,0,0,0,96,12,0,12,,,,2015-03-28 12:00,2015-04-11 12:00,,2014-12-14 08:00,2014-12-27 16:00,2014-12-14 08:00,2014-12-27 16:00,2014-12-14 08:00,2014-12-27 16:00,2015-03-28 12:00,2015-04-11 12:00,,PT_Normal,,,,,bb/eBeoPiUuHPPgPLZWp9w,6WWQv92nckaUkKCBP7TLXA,,,N,0,0,,,2014-04-05 12:28,2014-04-05 13:21,admin,admin,
1892,141635,1749,36000,642,0,N,N,N,CP_Drtn,TT_Task,DT_FixedDUR2,TK_NotStart,PROCMEPELE2170,Issue Purchase Order of Lighting Control  System,,700,0,96,0,0,0,96,12,0,12,,,,2015-04-11 12:00,2015-04-25 12:00,,2014-12-28 08:00,2015-01-12 16:00,2014-12-28 08:00,2015-01-12 16:00,2014-12-28 08:00,2015-01-12 16:00,2015-04-11 12:00,2015-04-25 12:00,,PT_Normal,,,,,JbAbp0rJcEGqPSIb+3LaFw,M5isRpP2MkGZTGcN8y0EFQ,,,N,0,0,,,2014-04-05 12:28,2014-04-05 13:21,admin,admin,
1893,141636,1749,36000,642,0,N,N,N,CP_Drtn,TT_Task,DT_FixedDUR2,TK_NotStart,PROCMEPELE2710,Manufacturing & Shipping of Lighting Control  System,,700,0,720,0,0,0,720,90,0,90,,,,2015-04-25 12:00,2015-07-29 12:00,,2015-01-13 08:00,2015-04-27 16:00,2015-01-13 08:00,2015-04-27 16:00,2015-01-13 08:00,2015-04-27 16:00,2015-04-25 12:00,2015-07-29 12:00,,PT_Normal,,,,,CO/zyKheWUCFbjcm8+LR0A,Ev9oWv3oGUGGt+3MgJbg2w,,,N,0,0,,,2014-04-05 12:28,2014-04-05 13:21,admin,admin,
1894,141637,1749,36000,642,0,N,N,N,CP_Drtn,TT_Task,DT_FixedDUR2,TK_NotStart,PROCMEPELE4510,Clearance & Delivery to Site of Lighting Control  System,,700,0,96,0,0,0,96,12,0,12,,,,2015-07-29 12:00,2015-08-10 12:00,,2015-04-28 08:00,2015-05-11 16:00,2015-04-28 08:00,2015-05-11 16:00,2015-04-28 08:00,2015-05-11 16:00,2015-07-29 12:00,2015-08-10 12:00,,PT_Normal,,,,,aFPthZ/gqE2WFAfw/4Gpgg,05ulQHYFy0yrq3o0l2E/HQ,,,N,0,0,,,2014-04-05 12:28,2014-04-05 13:21,admin,admin,
1895,141638,1749,36033,642,0,N,N,N,CP_Drtn,TT_Task,DT_FixedDUR2,TK_NotStart,PROCMEPELE2350,Preparation & Submission of Sound System for Common Area,,1260,0,144,0,0,0,144,18,0,18,,,,2015-01-17 12:00,2015-02-07 12:00,,2014-06-23 08:00,2014-07-22 14:00,2014-06-23 08:00,2014-07-22 14:00,2014-06-23 08:00,2014-07-22 14:00,2015-01-17 12:00,2015-02-07 12:00,,PT_Normal,,,,,vnRe5PCqhECV7mPQHH6ZaA,p5Dn+OVCtEm9ta92VSQ9Pg,,,N,0,0,,,2014-04-05 12:28,2014-04-05 13:21,admin,admin,
1896,141639,1749,36033,642,0,N,N,N,CP_Drtn,TT_Task,DT_FixedDUR2,TK_NotStart,PROCMEPELE2890,Review & Approval of Sound System for Common Area,,1260,0,96,0,0,0,96,12,0,12,,,,2015-02-07 12:00,2015-02-21 12:00,,2014-07-23 10:00,2014-08-10 16:00,2014-07-23 10:00,2014-08-10 16:00,2014-07-23 10:00,2014-08-10 16:00,2015-02-07 12:00,2015-02-21 12:00,,PT_Normal,,,,,LgTxGNCEm0CaCa4Oh1CGgQ,QtFWiftGTkCbbVDWEZYvQw,,,N,0,0,,,2014-04-05 12:28,2014-04-05 13:21,admin,admin,
1897,141640,1749,36033,642,0,N,N,N,CP_Drtn,TT_Task,DT_FixedDUR2,TK_NotStart,PROCMEPELE3520,Issue Purchase Order of Sound System for Common Area,,1260,0,96,0,0,0,96,12,0,12,,,,2015-02-21 12:00,2015-03-07 12:00,,2014-08-11 08:00,2014-08-24 16:00,2014-08-11 08:00,2014-08-24 16:00,2014-08-11 08:00,2014-08-24 16:00,2015-02-21 12:00,2015-03-07 12:00,,PT_Normal,,,,,iFHHGEWgEU6V51pYd4xGmA,lRD6/5gEiUqmyHOXszTA9A,,,N,0,0,,,2014-04-05 12:28,2014-04-05 13:21,admin,admin,
1898,141641,1749,36033,642,0,N,N,N,CP_Drtn,TT_Task,DT_FixedDUR2,TK_NotStart,PROCMEPELE4240,Manufacturing & Shipping of Sound System for Common Area,,1260,0,720,0,0,0,720,90,0,90,,,,2015-03-07 12:00,2015-06-17 12:00,,2014-08-25 08:00,2014-12-15 16:00,2014-08-25 08:00,2014-12-15 16:00,2014-08-25 08:00,2014-12-15 16:00,2015-03-07 12:00,2015-06-17 12:00,,PT_Normal,,,,,f310zg2SnUWCwMfDD54glg,qvIhyk+kh0S2VLEnhmuH0A,,,N,0,0,,,2014-04-05 12:28,2014-04-05 13:21,admin,admin,
1899,141642,1749,36033,642,0,N,N,N,CP_Drtn,TT_Task,DT_FixedDUR2,TK_NotStart,PROCMEPELE7030,Clearance & Delivery to Site of Sound System for Common Area,,1260,80,96,0,0,0,96,12,0,12,,,,2015-06-17 12:00,2015-06-29 12:00,,2014-12-16 08:00,2014-12-29 16:00,2014-12-16 08:00,2014-12-29 16:00,2014-12-16 08:00,2014-12-29 16:00,2015-06-17 12:00,2015-06-29 12:00,,PT_Normal,,,,,0N53vb+NRUGC/4vS1NCSgQ,QDB+axRFL0eFJZaroFDP3w,,,N,0,0,,,2014-04-05 12:28,2014-04-05 13:21,admin,admin,
1900,141643,1749,36016,642,0,N,N,N,CP_Drtn,TT_Task,DT_FixedDUR2,TK_NotStart,PROCMEPELE2620,Preparation & Submission of CCTV system,,1692,0,192,0,0,0,192,24,0,24,,,,2015-03-21 12:00,2015-04-18 12:00,,2014-06-23 08:00,2014-08-03 16:00,2014-06-23 08:00,2014-08-03 16:00,2014-06-23 08:00,2014-08-03 16:00,2015-03-21 12:00,2015-04-18 12:00,,PT_Normal,,,,,PpU+m448VkeO7Bn0c+5lsQ,xBxZHY2EI0+dEYT528ZmBA,,,N,0,0,,,2014-04-05 12:28,2014-04-05 13:21,admin,admin,
1901,141644,1749,36016,642,0,N,N,N,CP_Drtn,TT_Task,DT_FixedDUR2,TK_NotStart,PROCMEPELE3160,Review & Approval of CCTV system,,1692,512,96,0,0,0,96,12,0,12,,,,2015-04-18 12:00,2015-05-02 12:00,,2014-08-04 08:00,2014-08-17 16:00,2014-08-04 08:00,2014-08-17 16:00,2014-08-04 08:00,2014-08-17 16:00,2015-04-18 12:00,2015-05-02 12:00,,PT_Normal,,,,,YpqkRmPuPUCChwSboLsoEw,FbCSDb31H0m3v7Zm9jpJoQ,,,N,0,0,,,2014-04-05 12:28,2014-04-05 13:21,admin,admin,
1902,141645,1749,36016,642,0,N,N,N,CP_Drtn,TT_Task,DT_FixedDUR2,TK_NotStart,PROCMEPELE3970,Issue Purchase Order of CCTV system,,1180,0,96,0,0,0,96,12,0,12,,,,2015-05-02 12:00,2015-05-16 12:00,,2014-11-09 08:00,2014-11-22 16:00,2014-11-09 08:00,2014-11-22 16:00,2014-11-09 08:00,2014-11-22 16:00,2015-05-02 12:00,2015-05-16 12:00,,PT_Normal,,,,,db+3LvVWYEOWar1oMC6ECA,9hlVQKmtnEi0OS7ZRStYUw,,,N,0,0,,,2014-04-05 12:28,2014-04-05 13:21,admin,admin,
1903,141646,1749,36016,642,0,N,N,N,CP_Drtn,TT_Task,DT_FixedDUR2,TK_NotStart,PROCMEPELE4690,Manufacturing & Shipping of CCTV system,,1180,0,720,0,0,0,720,90,0,90,,,,2015-05-16 12:00,2015-08-16 12:00,,2014-11-23 08:00,2015-03-09 16:00,2014-11-23 08:00,2015-03-09 16:00,2014-11-23 08:00,2015-03-09 16:00,2015-05-16 12:00,2015-08-16 12:00,,PT_Normal,,,,,R3K0PcHokEqubAcMvHhh0Q,Rf30vfefwEmI8jHY+XOagQ,,,N,0,0,,,2014-04-05 12:28,2014-04-05 13:21,admin,admin,
1904,141647,1749,36016,642,0,N,N,N,CP_Drtn,TT_Task,DT_FixedDUR2,TK_NotStart,PROCMEPELE6490,Clearance & Delivery to Site of CCTV system,,1180,0,96,0,0,0,96,12,0,12,,,,2015-06-17 12:00,2015-06-29 12:00,,2014-12-28 08:00,2015-01-12 16:00,2014-12-28 08:00,2015-01-12 16:00,2014-12-28 08:00,2015-01-12 16:00,2015-06-17 12:00,2015-06-29 12:00,,PT_Normal,,,,,OMMcXMUL5kKBzngO2oR2Kg,ZtkN+iql40+89TwU5ArQMw,,,N,0,0,,,2014-04-05 12:28,2014-04-05 13:21,admin,admin,
1905,141648,1749,35987,642,0,N,N,N,CP_Drtn,TT_Task,DT_FixedDUR2,TK_NotStart,PROCMEPELE9440,Preparation & Submission of Air Craft Warning System,,1416,0,240,0,0,0,240,30,0,30,,,,2015-07-05 08:00,2015-08-03 16:00,,2014-12-14 08:00,2015-01-19 16:00,2014-12-14 08:00,2015-01-19 16:00,2014-12-14 08:00,2015-01-19 16:00,2015-07-05 08:00,2015-08-03 16:00,,PT_Normal,,,,,yL64TAm/GEG3XP+IoqqlVg,bnL41IOOCEmmX64kT8UT9w,,,N,0,0,,,2014-04-05 12:28,2014-04-05 13:21,admin,admin,
1906,141649,1749,35987,642,0,N,N,N,CP_Drtn,TT_Task,DT_FixedDUR2,TK_NotStart,PROCMEPELE9450,Review & Approval of Air Craft Warning System,,1416,0,96,0,0,0,96,12,0,12,,,,2015-08-04 08:00,2015-08-15 16:00,,2015-01-20 08:00,2015-02-02 16:00,2015-01-20 08:00,2015-02-02 16:00,2015-01-20 08:00,2015-02-02 16:00,2015-08-04 08:00,2015-08-15 16:00,,PT_Normal,,,,,ex5GwJ0aRUSYtuEBWGPCzQ,J1Sp7ptK7ky/MwO/5HAYIw,,,N,0,0,,,2014-04-05 12:28,2014-04-05 13:21,admin,admin,
1907,141650,1749,35987,642,0,N,N,N,CP_Drtn,TT_Task,DT_FixedDUR2,TK_NotStart,PROCMEPELE9460,Issue Purchase Order of Air Craft Warning System,,1416,0,96,0,0,0,96,12,0,12,,,,2015-11-14 08:00,2015-11-25 16:00,,2015-05-19 08:00,2015-06-01 16:00,2015-05-19 08:00,2015-06-01 16:00,2015-05-19 08:00,2015-06-01 16:00,2015-11-14 08:00,2015-11-25 16:00,,PT_Normal,,,,,qNARLEwBq0+vNswoY0lM9Q,kfF8vdS+O06sk7Iqt75D5g,,,N,0,0,,,2014-04-05 12:28,2014-04-05 13:21,admin,admin,
1908,141651,1749,35987,642,0,N,N,N,CP_Drtn,TT_Task,DT_FixedDUR2,TK_NotStart,PROCMEPELE9470,Manufacturing & Shipping of Air Craft Warning System,,1416,0,480,0,0,0,480,60,0,60,,,,2015-11-26 08:00,2016-01-24 16:00,,2015-06-02 08:00,2015-07-31 16:00,2015-06-02 08:00,2015-07-31 16:00,2015-06-02 08:00,2015-07-31 16:00,2015-11-26 08:00,2016-01-24 16:00,,PT_Normal,,,,,WqJRDcgjn0WEQCvgg5T3hw,bmPMG2V6gUS3apKWEXm5Vw,,,N,0,0,,,2014-04-05 12:28,2014-04-05 13:21,admin,admin,
1909,141652,1749,35987,642,0,N,N,N,CP_Drtn,TT_Task,DT_FixedDUR2,TK_NotStart,PROCMEPELE9480,Clearance & Delivery to Site of Air Craft Warning System,,1416,0,96,0,0,0,96,12,0,12,,,,2016-01-25 08:00,2016-02-05 16:00,,2015-08-01 08:00,2015-08-12 16:00,2015-08-01 08:00,2015-08-12 16:00,2015-08-01 08:00,2015-08-12 16:00,2016-01-25 08:00,2016-02-05 16:00,,PT_Normal,,,,,+mlKfzqpDEy6vxOqTA2dFA,PtVfuwO3S0CV63jJO8XBng,,,N,0,0,,,2014-04-05 12:28,2014-04-05 13:21,admin,admin,
1910,141653,1749,35561,642,0,N,N,N,CP_Drtn,TT_Task,DT_FixedDUR2,TK_NotStart,A1310,Preparation & Submission,,1824,0,320,0,0,0,320,40,0,40,,,,2015-04-09 08:00,2015-05-25 16:00,,2014-06-23 08:00,2014-08-21 16:00,2014-06-23 08:00,2014-08-21 16:00,2014-06-23 08:00,2014-08-21 16:00,2015-04-09 08:00,2015-05-25 16:00,,PT_Normal,,,,,llzKj6Umv0eRIOzcOSMUqA,atyDSbAu4EWgzfl308byqw,,,N,0,0,,,2014-04-05 12:28,2014-04-05 13:21,admin,admin,
1911,141654,1749,35561,642,0,N,N,N,CP_Drtn,TT_Task,DT_FixedDUR2,TK_NotStart,A1320,Review & Approval,,1824,0,112,0,0,0,112,14,0,14,,,,2015-05-26 08:00,2015-06-09 16:00,,2014-08-23 08:00,2014-09-07 16:00,2014-08-23 08:00,2014-09-07 16:00,2014-08-23 08:00,2014-09-07 16:00,2015-05-26 08:00,2015-06-09 16:00,,PT_Normal,,,,,0NQZqc0QDEqLDlnyB/Mdqg,qL1nGdZpXU6e7+f3RRjOnA,,,N,0,0,,,2014-04-05 12:28,2014-04-05 13:21,admin,admin,
1912,141655,1749,35561,642,0,N,N,N,CP_Drtn,TT_Task,DT_FixedDUR2,TK_NotStart,A1330,Issue Purchase Order,,1824,0,96,0,0,0,96,12,0,12,,,,2015-06-10 08:00,2015-06-21 16:00,,2014-09-08 08:00,2014-09-21 16:00,2014-09-08 08:00,2014-09-21 16:00,2014-09-08 08:00,2014-09-21 16:00,2015-06-10 08:00,2015-06-21 16:00,,PT_Normal,,,,,P3WH0PgawkS2PE4IoJkjVg,+o9SKfO920eTUWRkLEa+dg,,,N,0,0,,,2014-04-05 12:28,2014-04-05 13:21,admin,admin,
1913,141656,1749,35561,1447,0,N,N,N,CP_Drtn,TT_Task,DT_FixedDUR2,TK_NotStart,A1340,Manufacture & Shipping,,2184,0,1200,0,0,0,1200,150,0,150,,,,2015-06-22 08:00,2015-11-18 16:00,,2014-09-22 08:00,2015-02-18 16:00,2014-09-22 08:00,2015-02-18 16:00,2014-09-22 08:00,2015-02-18 16:00,2015-06-22 08:00,2015-11-18 16:00,,PT_Normal,,,,,WLg4Z8nZjkOZrczmYkx4Aw,xqnpHuQFFU6WHQvaqSNKBA,,,N,0,0,,,2014-04-05 12:28,2014-04-05 13:21,admin,admin,
1914,141657,1749,35561,642,0,N,N,N,CP_Drtn,TT_Task,DT_FixedDUR2,TK_NotStart,A1350,Clearance & Delivery,,2064,184,112,0,0,0,112,14,0,14,,,,2015-11-19 08:00,2015-12-02 16:00,,2015-02-19 08:00,2015-03-07 16:00,2015-02-19 08:00,2015-03-07 16:00,2015-02-19 08:00,2015-03-07 16:00,2015-11-19 08:00,2015-12-02 16:00,,PT_Normal,,,,,5LOpZHdNc0CSmnDx1JKN9Q,Ap3abXm0/0+DbB4KuUyr1A,,,N,0,0,,,2014-04-05 12:28,2014-04-05 13:21,admin,admin,
1915,141658,1749,35535,642,0,N,N,N,CP_Drtn,TT_Task,DT_FixedDUR2,TK_NotStart,A1560,Preparation & Submission,,2304,0,320,0,0,0,320,40,0,40,,,,2015-05-14 08:00,2015-06-25 16:00,,2014-05-18 08:00,2014-07-06 14:00,2014-05-18 08:00,2014-07-06 14:00,2014-05-18 08:00,2014-07-06 14:00,2015-05-14 08:00,2015-06-25 16:00,,PT_Normal,,,,,TkTndX2Nu0yjGHvzvnD4oQ,2aCppll1VkaeJ7yD63pmnA,,,N,0,0,,,2014-04-05 12:28,2014-04-05 13:21,admin,admin,
1916,141659,1749,35535,642,0,N,N,N,CP_Drtn,TT_Task,DT_FixedDUR2,TK_NotStart,A1570,Review & Approval,,2304,0,112,0,0,0,112,14,0,14,,,,2015-06-26 08:00,2015-07-09 16:00,,2014-07-07 10:00,2014-08-03 16:00,2014-07-07 10:00,2014-08-03 16:00,2014-07-07 10:00,2014-08-03 16:00,2015-06-26 08:00,2015-07-09 16:00,,PT_Normal,,,,,CyiixGclK0OQew+B3oE6hQ,YuHBKzlHV0CQuvyxjApRGw,,,N,0,0,,,2014-04-05 12:28,2014-04-05 13:21,admin,admin,
1917,141660,1749,35535,642,0,N,N,N,CP_Drtn,TT_Task,DT_FixedDUR2,TK_NotStart,A1580,Issue Purchase Order,,2304,0,96,0,0,0,96,12,0,12,,,,2015-07-10 08:00,2015-07-21 16:00,,2014-08-04 08:00,2014-08-17 16:00,2014-08-04 08:00,2014-08-17 16:00,2014-08-04 08:00,2014-08-17 16:00,2015-07-10 08:00,2015-07-21 16:00,,PT_Normal,,,,,CfUD4ehw00e0tYE/xaxucg,6UHsR2f+9UaUVqER/e6a7A,,,N,0,0,,,2014-04-05 12:28,2014-04-05 13:21,admin,admin,
1918,141661,1749,35535,642,0,N,N,N,CP_Drtn,TT_Task,DT_FixedDUR2,TK_NotStart,A1590,Manufacture & Shipping,,2304,0,960,0,0,0,960,120,0,120,,,,2015-07-22 08:00,2015-11-18 16:00,,2014-08-18 08:00,2015-01-14 16:00,2014-08-18 08:00,2015-01-14 16:00,2014-08-18 08:00,2015-01-14 16:00,2015-07-22 08:00,2015-11-18 16:00,,PT_Normal,,,,,2QZFYlCrYkqbMo+u31LKqA,lo29nqpH5kCUSUCGUzMKHA,,,N,0,0,,,2014-04-05 12:28,2014-04-05 13:21,admin,admin,
1919,141662,1749,35535,642,0,N,N,N,CP_Drtn,TT_Task,DT_FixedDUR2,TK_NotStart,A1600,Clearance & Delivery,,2304,424,112,0,0,0,112,14,0,14,,,,2015-11-19 08:00,2015-12-02 16:00,,2015-01-15 08:00,2015-01-31 16:00,2015-01-15 08:00,2015-01-31 16:00,2015-01-15 08:00,2015-01-31 16:00,2015-11-19 08:00,2015-12-02 16:00,,PT_Normal,,,,,GcaNxA7ZbUaHxf34FUhU4w,pDMabAY8bE+nAmyTirc/iw,,,N,0,0,,,2014-04-05 12:28,2014-04-05 13:21,admin,admin,
1920,141663,1749,35539,642,0,N,N,N,CP_Drtn,TT_Task,DT_FixedDUR2,TK_NotStart,A1010,Preparation & Submission,,1228,0,320,0,0,0,320,40,0,40,,,,2014-11-24 12:00,2015-01-12 12:00,,2014-05-06 08:00,2014-06-22 16:00,2014-05-06 08:00,2014-06-22 16:00,2014-05-06 08:00,2014-06-22 16:00,2014-11-24 12:00,2015-01-12 12:00,,PT_Normal,,,,,CesfzbMSIUKdu2t7gkMaDA,,,,N,0,0,,,2014-04-05 12:28,2014-04-05 13:21,admin,admin,
1921,141664,1749,35539,642,0,N,N,N,CP_Drtn,TT_Task,DT_FixedDUR2,TK_NotStart,A1020,Review & Approval,,1228,0,112,0,0,0,112,14,0,14,,,,2015-01-12 12:00,2015-01-28 12:00,,2014-06-23 08:00,2014-07-14 14:00,2014-06-23 08:00,2014-07-14 14:00,2014-06-23 08:00,2014-07-14 14:00,2015-01-12 12:00,2015-01-28 12:00,,PT_Normal,,,,,9F3r24vTP0Kkkjy1H445sQ,,,,N,0,0,,,2014-04-05 12:28,2014-04-05 13:21,admin,admin,
1922,141665,1749,35539,642,0,N,N,N,CP_Drtn,TT_Task,DT_FixedDUR2,TK_NotStart,A1030,Issue Purchase Order,,1228,0,96,0,0,0,96,12,0,12,,,,2015-01-28 12:00,2015-02-11 12:00,,2014-07-15 10:00,2014-08-05 16:00,2014-07-15 10:00,2014-08-05 16:00,2014-07-15 10:00,2014-08-05 16:00,2015-01-28 12:00,2015-02-11 12:00,,PT_Normal,,,,,bxY1tp7puU6mC5xTnqlb2Q,,,,N,0,0,,,2014-04-05 12:28,2014-04-05 13:21,admin,admin,
1923,141666,1749,35539,642,0,N,N,N,CP_Drtn,TT_Task,DT_FixedDUR2,TK_NotStart,A1040,Manufacture & Shipping,,1228,0,480,0,0,0,480,60,0,60,,,,2015-02-11 12:00,2015-04-22 12:00,,2014-08-06 08:00,2014-10-19 16:00,2014-08-06 08:00,2014-10-19 16:00,2014-08-06 08:00,2014-10-19 16:00,2015-02-11 12:00,2015-04-22 12:00,,PT_Normal,,,,,D0pNCucePU2VsoPqPkrsaQ,,,,N,0,0,,,2014-04-05 12:28,2014-04-05 13:21,admin,admin,
1924,141667,1749,35539,642,0,N,N,N,CP_Drtn,TT_Task,DT_FixedDUR2,TK_NotStart,A1050,Clearance & Delivery,,1228,176,112,0,0,0,112,14,0,14,,,,2015-04-22 12:00,2015-05-09 12:00,,2014-10-20 08:00,2014-11-08 16:00,2014-10-20 08:00,2014-11-08 16:00,2014-10-20 08:00,2014-11-08 16:00,2015-04-22 12:00,2015-05-09 12:00,,PT_Normal,,,,,yB2VunihHUmi6ZgjU5pydQ,,,,N,0,0,,,2014-04-05 12:28,2014-04-05 13:21,admin,admin,
1925,141668,1749,35542,642,0,N,N,N,CP_Drtn,TT_Task,DT_FixedDUR2,TK_NotStart,A1210,Preparation & Submission,,1268,0,480,0,0,0,480,60,0,60,,,,2014-12-17 12:00,2015-02-28 12:00,,2014-05-24 08:00,2014-08-16 16:00,2014-05-24 08:00,2014-08-16 16:00,2014-05-24 08:00,2014-08-16 16:00,2014-12-17 12:00,2015-02-28 12:00,,PT_Normal,,,,,klQO7iNfnU6VhKKhMZBweQ,atyDSbAu4EWgzfl308byqw,,,N,0,0,,,2014-04-05 12:28,2014-04-05 13:21,admin,admin,
1926,141669,1749,35542,642,0,N,N,N,CP_Drtn,TT_Task,DT_FixedDUR2,TK_NotStart,A1220,Review & Approval,,1268,0,112,0,0,0,112,14,0,14,,,,2015-02-28 12:00,2015-03-16 12:00,,2014-08-17 08:00,2014-09-01 16:00,2014-08-17 08:00,2014-09-01 16:00,2014-08-17 08:00,2014-09-01 16:00,2015-02-28 12:00,2015-03-16 12:00,,PT_Normal,,,,,GiIyYJPeO0Cft5A0ZdTOWQ,qL1nGdZpXU6e7+f3RRjOnA,,,N,0,0,,,2014-04-05 12:28,2014-04-05 13:21,admin,admin,
1927,141670,1749,35542,642,0,N,N,N,CP_Drtn,TT_Task,DT_FixedDUR2,TK_NotStart,A1230,Issue Purchase Order,,1268,0,96,0,0,0,96,12,0,12,,,,2015-03-16 12:00,2015-03-30 12:00,,2014-09-02 08:00,2014-09-15 16:00,2014-09-02 08:00,2014-09-15 16:00,2014-09-02 08:00,2014-09-15 16:00,2015-03-16 12:00,2015-03-30 12:00,,PT_Normal,,,,,HRQ48bda2UGfc6tR/m2AAA,+o9SKfO920eTUWRkLEa+dg,,,N,0,0,,,2014-04-05 12:28,2014-04-05 13:21,admin,admin,
1928,141671,1749,35542,642,0,N,N,N,CP_Drtn,TT_Task,DT_FixedDUR2,TK_NotStart,A1240,Manufacture & Shipping,,1268,0,560,0,0,0,560,70,0,70,,,,2015-03-30 12:00,2015-06-17 12:00,,2014-09-16 08:00,2014-12-14 16:00,2014-09-16 08:00,2014-12-14 16:00,2014-09-16 08:00,2014-12-14 16:00,2015-03-30 12:00,2015-06-17 12:00,,PT_Normal,,,,,mwLJxJUbeEaZXWECWSmqQQ,xqnpHuQFFU6WHQvaqSNKBA,,,N,0,0,,,2014-04-05 12:28,2014-04-05 13:21,admin,admin,
1929,141672,1749,35542,642,0,N,N,N,CP_Drtn,TT_Task,DT_FixedDUR2,TK_NotStart,A1250,Clearance & Delivery,,1268,256,136,0,0,0,136,17,0,17,,,,2015-06-17 12:00,2015-07-04 12:00,,2014-12-15 08:00,2015-01-05 16:00,2014-12-15 08:00,2015-01-05 16:00,2014-12-15 08:00,2015-01-05 16:00,2015-06-17 12:00,2015-07-04 12:00,,PT_Normal,,,,,X1AHZW3+jEe7qnMX0UgINQ,Ap3abXm0/0+DbB4KuUyr1A,,,N,0,0,,,2014-04-05 12:28,2014-04-05 13:21,admin,admin,
1930,141673,1749,35547,642,0,N,N,N,CP_Drtn,TT_Task,DT_FixedDUR2,TK_NotStart,A1260,Preparation & Submission,,2020,0,80,0,0,0,80,10,0,10,,,,2015-01-22 12:00,2015-02-03 12:00,,2014-03-08 08:00,2014-03-18 16:00,2014-03-08 08:00,2014-03-18 16:00,2014-03-08 08:00,2014-03-18 16:00,2015-01-22 12:00,2015-02-03 12:00,,PT_Normal,,,,,OOiky0orWkmmTmznrXEM+Q,atyDSbAu4EWgzfl308byqw,,,N,0,0,,,2014-04-05 12:28,2014-04-05 13:21,admin,admin,
1931,141674,1749,35547,642,0,N,N,N,CP_Drtn,TT_Task,DT_FixedDUR2,TK_NotStart,A1270,Review & Approval,,2020,0,112,0,0,0,112,14,0,14,,,,2015-02-03 12:00,2015-02-19 12:00,,2014-03-19 08:00,2014-04-03 16:00,2014-03-19 08:00,2014-04-03 16:00,2014-03-19 08:00,2014-04-03 16:00,2015-02-03 12:00,2015-02-19 12:00,,PT_Normal,,,,,kpPL+rdAL0ySFH1z3PiMNQ,qL1nGdZpXU6e7+f3RRjOnA,,,N,0,0,,,2014-04-05 12:28,2014-04-05 13:21,admin,admin,
1932,141675,1749,35547,642,0,N,N,N,CP_Drtn,TT_Task,DT_FixedDUR2,TK_NotStart,A1280,Issue Purchase Order,,2020,0,96,0,0,0,96,12,0,12,,,,2015-02-19 12:00,2015-03-05 12:00,,2014-04-05 08:00,2014-04-17 16:00,2014-04-05 08:00,2014-04-17 16:00,2014-04-05 08:00,2014-04-17 16:00,2015-02-19 12:00,2015-03-05 12:00,,PT_Normal,,,,,ChKOn1u6rUaQjGxnPVdGaA,+o9SKfO920eTUWRkLEa+dg,,,N,0,0,,,2014-04-05 12:28,2014-04-05 13:21,admin,admin,
1933,141676,1749,35547,642,0,N,N,N,CP_Drtn,TT_Task,DT_FixedDUR2,TK_NotStart,A1290,Manufacture & Shipping,,2020,0,320,0,0,0,320,40,0,40,,,,2015-03-05 12:00,2015-04-21 12:00,,2014-04-19 08:00,2014-06-04 16:00,2014-04-19 08:00,2014-06-04 16:00,2014-04-19 08:00,2014-06-04 16:00,2015-03-05 12:00,2015-04-21 12:00,,PT_Normal,,,,,QsZp+Qmrxk6epJsclHNYFw,xqnpHuQFFU6WHQvaqSNKBA,,,N,0,0,,,2014-04-05 12:28,2014-04-05 13:21,admin,admin,
1934,141677,1749,35547,642,0,N,N,N,CP_Drtn,TT_Task,DT_FixedDUR2,TK_NotStart,A1300,Clearance & Delivery,,2020,968,80,0,0,0,80,10,0,10,,,,2015-04-21 12:00,2015-05-03 12:00,,2014-06-05 08:00,2014-06-16 16:00,2014-06-05 08:00,2014-06-16 16:00,2014-06-05 08:00,2014-06-16 16:00,2015-04-21 12:00,2015-05-03 12:00,,PT_Normal,,,,,IfHod8pt8kCqi0eTk8gsJA,Ap3abXm0/0+DbB4KuUyr1A,,,N,0,0,,,2014-04-05 12:28,2014-04-05 13:21,admin,admin,
1935,141678,1749,35537,642,0,N,N,N,CP_Drtn,TT_Task,DT_FixedDUR2,TK_NotStart,A1060,Preparation & Submission,,1148,0,320,0,0,0,320,40,0,40,,,,2014-12-06 12:00,2015-01-24 12:00,,2014-05-29 08:00,2014-07-26 14:00,2014-05-29 08:00,2014-07-26 14:00,2014-05-29 08:00,2014-07-26 14:00,2014-12-06 12:00,2015-01-24 12:00,,PT_Normal,,,,,G+dJrj0tdUykGwMGDf3V5w,atyDSbAu4EWgzfl308byqw,,,N,0,0,,,2014-04-05 12:28,2014-04-05 13:21,admin,admin,
1936,141679,1749,35537,642,0,N,N,N,CP_Drtn,TT_Task,DT_FixedDUR2,TK_NotStart,A1070,Review & Approval,,1148,0,112,0,0,0,112,14,0,14,,,,2015-01-24 12:00,2015-02-09 12:00,,2014-07-27 10:00,2014-08-14 16:00,2014-07-27 10:00,2014-08-14 16:00,2014-07-27 10:00,2014-08-14 16:00,2015-01-24 12:00,2015-02-09 12:00,,PT_Normal,,,,,hretxXw810eUYe5UKyaWMg,qL1nGdZpXU6e7+f3RRjOnA,,,N,0,0,,,2014-04-05 12:28,2014-04-05 13:21,admin,admin,
1937,141680,1749,35537,642,0,N,N,N,CP_Drtn,TT_Task,DT_FixedDUR2,TK_NotStart,A1080,Issue Purchase Order,,1148,0,80,0,0,0,80,10,0,10,,,,2015-02-09 12:00,2015-02-21 12:00,,2014-08-16 08:00,2014-08-26 16:00,2014-08-16 08:00,2014-08-26 16:00,2014-08-16 08:00,2014-08-26 16:00,2015-02-09 12:00,2015-02-21 12:00,,PT_Normal,,,,,T1Yf0cagaEC3vYjtHrWuoQ,+o9SKfO920eTUWRkLEa+dg,,,N,0,0,,,2014-04-05 12:28,2014-04-05 13:21,admin,admin,
1938,141681,1749,35537,1447,0,N,N,N,CP_Drtn,TT_Task,DT_FixedDUR2,TK_NotStart,A1090,Manufacture & Shipping,,1428,0,480,0,0,0,480,60,0,60,,,,2015-02-21 12:00,2015-04-22 12:00,,2014-08-27 08:00,2014-10-25 16:00,2014-08-27 08:00,2014-10-25 16:00,2014-08-27 08:00,2014-10-25 16:00,2015-02-21 12:00,2015-04-22 12:00,,PT_Normal,,,,,bNqpXHbQEkG1da0YRjZ8sQ,xqnpHuQFFU6WHQvaqSNKBA,,,N,0,0,,,2014-04-05 12:28,2014-04-05 13:21,admin,admin,
1939,141682,1749,35537,642,0,N,N,N,CP_Drtn,TT_Task,DT_FixedDUR2,TK_NotStart,A1100,Clearance & Delivery,,1196,144,112,0,0,0,112,14,0,14,,,,2015-04-22 12:00,2015-05-09 12:00,,2014-10-26 08:00,2014-11-12 16:00,2014-10-26 08:00,2014-11-12 16:00,2014-10-26 08:00,2014-11-12 16:00,2015-04-22 12:00,2015-05-09 12:00,,PT_Normal,,,,,YUEdzOB+00CjtPLxNSX8Hg,Ap3abXm0/0+DbB4KuUyr1A,,,N,0,0,,,2014-04-05 12:28,2014-04-05 13:21,admin,admin,
1940,141683,1749,35546,642,0,N,N,N,CP_Drtn,TT_Task,DT_FixedDUR2,TK_NotStart,A1510,Preparation & Submission,,888,0,48,0,0,0,48,6,0,6,,,,2014-09-28 08:00,2014-10-07 14:00,,2014-05-06 08:00,2014-05-12 16:00,2014-05-06 08:00,2014-05-12 16:00,2014-05-06 08:00,2014-05-12 16:00,2014-09-28 08:00,2014-10-07 14:00,,PT_Normal,,,,,2SomJgsSRU+z4r1jNBNm3g,atyDSbAu4EWgzfl308byqw,,,N,0,0,,,2014-04-05 12:28,2014-04-05 13:21,admin,admin,
1941,141684,1749,35546,642,0,N,N,N,CP_Drtn,TT_Task,DT_FixedDUR2,TK_NotStart,A1520,Review & Approval,,888,0,112,0,0,0,112,14,0,14,,,,2014-10-08 10:00,2014-10-26 16:00,,2014-05-13 08:00,2014-05-28 16:00,2014-05-13 08:00,2014-05-28 16:00,2014-05-13 08:00,2014-05-28 16:00,2014-10-08 10:00,2014-10-26 16:00,,PT_Normal,,,,,VSde+2DbJky6UKg6pLApxw,qL1nGdZpXU6e7+f3RRjOnA,,,N,0,0,,,2014-04-05 12:28,2014-04-05 13:21,admin,admin,
1942,141685,1749,35546,642,0,N,N,N,CP_Drtn,TT_Task,DT_FixedDUR2,TK_NotStart,A1530,Issue Purchase Order,,1364,0,96,0,0,0,96,12,0,12,,,,2015-01-08 12:00,2015-01-22 12:00,,2014-05-29 08:00,2014-06-11 16:00,2014-05-29 08:00,2014-06-11 16:00,2014-05-29 08:00,2014-06-11 16:00,2015-01-08 12:00,2015-01-22 12:00,,PT_Normal,,,,,DPVHsnzVYEGlVzGNliL1Gw,+o9SKfO920eTUWRkLEa+dg,,,N,0,0,,,2014-04-05 12:28,2014-04-05 13:21,admin,admin,
1943,141686,1749,35546,642,0,N,N,N,CP_Drtn,TT_Task,DT_FixedDUR2,TK_NotStart,A1540,Manufacture & Shipping,,1364,0,800,0,0,0,800,100,0,100,,,,2015-01-22 12:00,2015-05-19 12:00,,2014-06-12 08:00,2014-10-27 16:00,2014-06-12 08:00,2014-10-27 16:00,2014-06-12 08:00,2014-10-27 16:00,2015-01-22 12:00,2015-05-19 12:00,,PT_Normal,,,,,tTQWI2oFYk6xxL0bH63n3w,xqnpHuQFFU6WHQvaqSNKBA,,,N,0,0,,,2014-04-05 12:28,2014-04-05 13:21,admin,admin,
1944,141687,1749,35546,642,0,N,N,N,CP_Drtn,TT_Task,DT_FixedDUR2,TK_NotStart,A1550,Clearance & Delivery,,1364,352,112,0,0,0,112,14,0,14,,,,2015-05-19 12:00,2015-06-04 12:00,,2014-10-28 08:00,2014-11-15 16:00,2014-10-28 08:00,2014-11-15 16:00,2014-10-28 08:00,2014-11-15 16:00,2015-05-19 12:00,2015-06-04 12:00,,PT_Normal,,,,,e4mDgTb3kkG2w9ugPGTZew,Ap3abXm0/0+DbB4KuUyr1A,,,N,0,0,,,2014-04-05 12:28,2014-04-05 13:21,admin,admin,
1945,141688,1749,35543,642,0,N,N,N,CP_Drtn,TT_Task,DT_FixedDUR2,TK_NotStart,A1110,Preparation & Submission,,1388,0,160,0,0,0,160,20,0,20,,,,2014-11-30 12:00,2014-12-23 12:00,,2014-04-17 08:00,2014-05-11 16:00,2014-04-17 08:00,2014-05-11 16:00,2014-04-17 08:00,2014-05-11 16:00,2014-11-30 12:00,2014-12-23 12:00,,PT_Normal,,,,,3GloH5Pjik6B8WKR0W1RcA,atyDSbAu4EWgzfl308byqw,,,N,0,0,,,2014-04-05 12:28,2014-04-05 13:21,admin,admin,
1946,141689,1749,35543,642,0,N,N,N,CP_Drtn,TT_Task,DT_FixedDUR2,TK_NotStart,A1120,Review & Approval,,1388,0,112,0,0,0,112,14,0,14,,,,2014-12-23 12:00,2015-01-11 12:00,,2014-05-12 08:00,2014-05-27 16:00,2014-05-12 08:00,2014-05-27 16:00,2014-05-12 08:00,2014-05-27 16:00,2014-12-23 12:00,2015-01-11 12:00,,PT_Normal,,,,,4NxeDbCIB0mj2yAyxVdWrw,qL1nGdZpXU6e7+f3RRjOnA,,,N,0,0,,,2014-04-05 12:28,2014-04-05 13:21,admin,admin,
1947,141690,1749,35543,642,0,N,N,N,CP_Drtn,TT_Task,DT_FixedDUR2,TK_NotStart,A1130,Issue Purchase Order,,1388,0,96,0,0,0,96,12,0,12,,,,2015-01-11 12:00,2015-01-25 12:00,,2014-05-28 08:00,2014-06-10 16:00,2014-05-28 08:00,2014-06-10 16:00,2014-05-28 08:00,2014-06-10 16:00,2015-01-11 12:00,2015-01-25 12:00,,PT_Normal,,,,,3XV3asFz7UOXW1v+hBUbaA,+o9SKfO920eTUWRkLEa+dg,,,N,0,0,,,2014-04-05 12:28,2014-04-05 13:21,admin,admin,
1948,141691,1749,35543,642,0,N,N,N,CP_Drtn,TT_Task,DT_FixedDUR2,TK_NotStart,A1140,Manufacture & Shipping,,1388,0,400,0,0,0,400,50,0,50,,,,2015-01-25 12:00,2015-03-24 12:00,,2014-06-11 08:00,2014-08-23 16:00,2014-06-11 08:00,2014-08-23 16:00,2014-06-11 08:00,2014-08-23 16:00,2015-01-25 12:00,2015-03-24 12:00,,PT_Normal,,,,,McSHjjXuDEq+wT+GbRrHxg,xqnpHuQFFU6WHQvaqSNKBA,,,N,0,0,,,2014-04-05 12:28,2014-04-05 13:21,admin,admin,
1949,141692,1749,35543,642,0,N,N,N,CP_Drtn,TT_Task,DT_FixedDUR2,TK_NotStart,A1150,Clearance & Delivery,,1388,336,112,0,0,0,112,14,0,14,,,,2015-03-24 12:00,2015-04-09 12:00,,2014-08-24 08:00,2014-09-08 16:00,2014-08-24 08:00,2014-09-08 16:00,2014-08-24 08:00,2014-09-08 16:00,2015-03-24 12:00,2015-04-09 12:00,,PT_Normal,,,,,UjP27vGUtE2862OgGYk9FA,Ap3abXm0/0+DbB4KuUyr1A,,,N,0,0,,,2014-04-05 12:28,2014-04-05 13:21,admin,admin,
1950,141693,1749,35536,642,0,N,N,N,CP_Drtn,TT_Task,DT_FixedDUR2,TK_NotStart,A1160,Preparation & Submission,,1212,0,160,0,0,0,160,20,0,20,,,,2015-01-15 12:00,2015-02-08 12:00,,2014-06-29 08:00,2014-08-04 16:00,2014-06-29 08:00,2014-08-04 16:00,2014-06-29 08:00,2014-08-04 16:00,2015-01-15 12:00,2015-02-08 12:00,,PT_Normal,,,,,EoOv361YfUCRHGaduhZFPg,atyDSbAu4EWgzfl308byqw,,,N,0,0,,,2014-04-05 12:28,2014-04-05 13:21,admin,admin,
1951,141694,1749,35536,642,0,N,N,N,CP_Drtn,TT_Task,DT_FixedDUR2,TK_NotStart,A1170,Review & Approval,,1212,0,112,0,0,0,112,14,0,14,,,,2015-02-08 12:00,2015-02-24 12:00,,2014-08-05 08:00,2014-08-20 16:00,2014-08-05 08:00,2014-08-20 16:00,2014-08-05 08:00,2014-08-20 16:00,2015-02-08 12:00,2015-02-24 12:00,,PT_Normal,,,,,Q5xOGh6G506UZs8dSVubAw,qL1nGdZpXU6e7+f3RRjOnA,,,N,0,0,,,2014-04-05 12:28,2014-04-05 13:21,admin,admin,
1952,141695,1749,35536,642,0,N,N,N,CP_Drtn,TT_Task,DT_FixedDUR2,TK_NotStart,A1180,Issue Purchase Order,,1212,0,96,0,0,0,96,12,0,12,,,,2015-02-24 12:00,2015-03-10 12:00,,2014-08-21 08:00,2014-09-03 16:00,2014-08-21 08:00,2014-09-03 16:00,2014-08-21 08:00,2014-09-03 16:00,2015-02-24 12:00,2015-03-10 12:00,,PT_Normal,,,,,UVJn7d7SV0Gef3iGTzNSww,+o9SKfO920eTUWRkLEa+dg,,,N,0,0,,,2014-04-05 12:28,2014-04-05 13:21,admin,admin,
1953,141696,1749,35536,642,0,N,N,N,CP_Drtn,TT_Task,DT_FixedDUR2,TK_NotStart,A1190,Manufacture & Shipping,,1212,0,720,0,0,0,720,90,0,90,,,,2015-03-10 12:00,2015-06-20 12:00,,2014-09-04 08:00,2014-12-25 16:00,2014-09-04 08:00,2014-12-25 16:00,2014-09-04 08:00,2014-12-25 16:00,2015-03-10 12:00,2015-06-20 12:00,,PT_Normal,,,,,p1dNtKWPWkicilOB0fbrcg,xqnpHuQFFU6WHQvaqSNKBA,,,N,0,0,,,2014-04-05 12:28,2014-04-05 13:21,admin,admin,
1954,141697,1749,35536,642,0,N,N,N,CP_Drtn,TT_Task,DT_FixedDUR2,TK_NotStart,A1200,Clearance & Delivery,,1212,200,112,0,0,0,112,14,0,14,,,,2015-06-20 12:00,2015-07-04 12:00,,2014-12-27 08:00,2015-01-13 16:00,2014-12-27 08:00,2015-01-13 16:00,2014-12-27 08:00,2015-01-13 16:00,2015-06-20 12:00,2015-07-04 12:00,,PT_Normal,,,,,n7wt+kLIkEa0Oign/4N+OQ,Ap3abXm0/0+DbB4KuUyr1A,,,N,0,0,,,2014-04-05 12:28,2014-04-05 13:21,admin,admin,
1955,141698,1749,35566,642,0,N,N,N,CP_Drtn,TT_Task,DT_FixedDUR2,TK_NotStart,A1360,Preparation & Submission,,1532,0,320,0,0,0,320,40,0,40,,,,2014-12-27 12:00,2015-02-14 12:00,,2014-04-23 08:00,2014-06-09 16:00,2014-04-23 08:00,2014-06-09 16:00,2014-04-23 08:00,2014-06-09 16:00,2014-12-27 12:00,2015-02-14 12:00,,PT_Normal,,,,,pdw1j1KZukiH1zuKj7VFwA,atyDSbAu4EWgzfl308byqw,,,N,0,0,,,2014-04-05 12:28,2014-04-05 13:21,admin,admin,
1956,141699,1749,35566,642,0,N,N,N,CP_Drtn,TT_Task,DT_FixedDUR2,TK_NotStart,A1370,Review & Approval,,1532,0,112,0,0,0,112,14,0,14,,,,2015-02-14 12:00,2015-03-02 12:00,,2014-06-10 08:00,2014-06-26 16:00,2014-06-10 08:00,2014-06-26 16:00,2014-06-10 08:00,2014-06-26 16:00,2015-02-14 12:00,2015-03-02 12:00,,PT_Normal,,,,,1rgcnlLqq0aJGrAHCwuQXg,qL1nGdZpXU6e7+f3RRjOnA,,,N,0,0,,,2014-04-05 12:28,2014-04-05 13:21,admin,admin,
1957,141700,1749,35566,642,0,N,N,N,CP_Drtn,TT_Task,DT_FixedDUR2,TK_NotStart,A1380,Issue Purchase Order,,1532,0,96,0,0,0,96,12,0,12,,,,2015-03-02 12:00,2015-03-16 12:00,,2014-06-28 08:00,2014-07-18 14:00,2014-06-28 08:00,2014-07-18 14:00,2014-06-28 08:00,2014-07-18 14:00,2015-03-02 12:00,2015-03-16 12:00,,PT_Normal,,,,,B5P/3P0vx0WLZg8za43reA,+o9SKfO920eTUWRkLEa+dg,,,N,0,0,,,2014-04-05 12:28,2014-04-05 13:21,admin,admin,
1958,141701,1749,35566,642,0,N,N,N,CP_Drtn,TT_Task,DT_FixedDUR2,TK_NotStart,A1390,Manufacture & Shipping,,1532,0,560,0,0,0,560,70,0,70,,,,2015-03-16 12:00,2015-06-05 12:00,,2014-07-19 10:00,2014-10-19 16:00,2014-07-19 10:00,2014-10-19 16:00,2014-07-19 10:00,2014-10-19 16:00,2015-03-16 12:00,2015-06-05 12:00,,PT_Normal,,,,,x7juEN1es0WBJKz/jlWI8g,xqnpHuQFFU6WHQvaqSNKBA,,,N,0,0,,,2014-04-05 12:28,2014-04-05 13:21,admin,admin,
1959,141702,1749,35566,642,0,N,N,N,CP_Drtn,TT_Task,DT_FixedDUR2,TK_NotStart,A1400,Clearance & Delivery,,1532,520,112,0,0,0,112,14,0,14,,,,2015-06-05 12:00,2015-06-19 12:00,,2014-10-20 08:00,2014-11-08 16:00,2014-10-20 08:00,2014-11-08 16:00,2014-10-20 08:00,2014-11-08 16:00,2015-06-05 12:00,2015-06-19 12:00,,PT_Normal,,,,,JNGEN5Jsx0OA8DTgXvCdiA,Ap3abXm0/0+DbB4KuUyr1A,,,N,0,0,,,2014-04-05 12:28,2014-04-05 13:21,admin,admin,
1960,141703,1749,35533,642,0,N,N,N,CP_Drtn,TT_Task,DT_FixedDUR2,TK_NotStart,A1410,Preparation & Submission,,1612,0,160,0,0,0,160,20,0,20,,,,2015-01-15 12:00,2015-02-08 12:00,,2014-04-29 08:00,2014-05-22 16:00,2014-04-29 08:00,2014-05-22 16:00,2014-04-29 08:00,2014-05-22 16:00,2015-01-15 12:00,2015-02-08 12:00,,PT_Normal,,,,,GdhoN3jrzU6QoBYe6ONlzA,atyDSbAu4EWgzfl308byqw,,,N,0,0,,,2014-04-05 12:28,2014-04-05 13:21,admin,admin,
1961,141704,1749,35533,642,0,N,N,N,CP_Drtn,TT_Task,DT_FixedDUR2,TK_NotStart,A1420,Review & Approval,,1612,0,112,0,0,0,112,14,0,14,,,,2015-02-08 12:00,2015-02-24 12:00,,2014-05-24 08:00,2014-06-08 16:00,2014-05-24 08:00,2014-06-08 16:00,2014-05-24 08:00,2014-06-08 16:00,2015-02-08 12:00,2015-02-24 12:00,,PT_Normal,,,,,/vr8TJ0rdUCwvAZ23+7vmg,qL1nGdZpXU6e7+f3RRjOnA,,,N,0,0,,,2014-04-05 12:28,2014-04-05 13:21,admin,admin,
1962,141705,1749,35533,642,0,N,N,N,CP_Drtn,TT_Task,DT_FixedDUR2,TK_NotStart,A1430,Issue Purchase Order,,1612,0,96,0,0,0,96,12,0,12,,,,2015-02-24 12:00,2015-03-10 12:00,,2014-06-09 08:00,2014-06-23 16:00,2014-06-09 08:00,2014-06-23 16:00,2014-06-09 08:00,2014-06-23 16:00,2015-02-24 12:00,2015-03-10 12:00,,PT_Normal,,,,,cM1JdE2WjEq7B5IreEg9ew,+o9SKfO920eTUWRkLEa+dg,,,N,0,0,,,2014-04-05 12:28,2014-04-05 13:21,admin,admin,
1963,141706,1749,35533,642,0,N,N,N,CP_Drtn,TT_Task,DT_FixedDUR2,TK_NotStart,A1440,Manufacture & Shipping,,1612,0,720,0,0,0,720,90,0,90,,,,2015-03-10 12:00,2015-06-20 12:00,,2014-06-24 08:00,2014-10-26 16:00,2014-06-24 08:00,2014-10-26 16:00,2014-06-24 08:00,2014-10-26 16:00,2015-03-10 12:00,2015-06-20 12:00,,PT_Normal,,,,,L8Fed4qIMU65sn48NHWQ6g,xqnpHuQFFU6WHQvaqSNKBA,,,N,0,0,,,2014-04-05 12:28,2014-04-05 13:21,admin,admin,
1964,141707,1749,35533,642,0,N,N,N,CP_Drtn,TT_Task,DT_FixedDUR2,TK_NotStart,A1450,Clearance & Delivery,,1612,600,112,0,0,0,112,14,0,14,,,,2015-06-20 12:00,2015-07-04 12:00,,2014-10-27 08:00,2014-11-13 16:00,2014-10-27 08:00,2014-11-13 16:00,2014-10-27 08:00,2014-11-13 16:00,2015-06-20 12:00,2015-07-04 12:00,,PT_Normal,,,,,CGa65tHhhE6BNTaAWVucCw,Ap3abXm0/0+DbB4KuUyr1A,,,N,0,0,,,2014-04-05 12:28,2014-04-05 13:21,admin,admin,
1965,141708,1749,35551,642,0,N,N,N,CP_Drtn,TT_Task,DT_FixedDUR2,TK_NotStart,A1460,Preparation & Submission,,1612,0,320,0,0,0,320,40,0,40,,,,2015-01-27 12:00,2015-03-15 12:00,,2014-05-12 08:00,2014-06-28 16:00,2014-05-12 08:00,2014-06-28 16:00,2014-05-12 08:00,2014-06-28 16:00,2015-01-27 12:00,2015-03-15 12:00,,PT_Normal,,,,,5uBZ8bE09E6HZzeptFZ9Mw,atyDSbAu4EWgzfl308byqw,,,N,0,0,,,2014-04-05 12:28,2014-04-05 13:21,admin,admin,
1966,141709,1749,35551,642,0,N,N,N,CP_Drtn,TT_Task,DT_FixedDUR2,TK_NotStart,A1470,Review & Approval,,1612,0,112,0,0,0,112,14,0,14,,,,2015-03-15 12:00,2015-03-31 12:00,,2014-06-29 08:00,2014-07-24 14:00,2014-06-29 08:00,2014-07-24 14:00,2014-06-29 08:00,2014-07-24 14:00,2015-03-15 12:00,2015-03-31 12:00,,PT_Normal,,,,,hT9xopzEcUOIRZMnnMg1IA,qL1nGdZpXU6e7+f3RRjOnA,,,N,0,0,,,2014-04-05 12:28,2014-04-05 13:21,admin,admin,
1967,141710,1749,35551,642,0,N,N,N,CP_Drtn,TT_Task,DT_FixedDUR2,TK_NotStart,A1480,Issue Purchase Order,,1612,0,96,0,0,0,96,12,0,12,,,,2015-03-31 12:00,2015-04-14 12:00,,2014-07-25 10:00,2014-08-11 16:00,2014-07-25 10:00,2014-08-11 16:00,2014-07-25 10:00,2014-08-11 16:00,2015-03-31 12:00,2015-04-14 12:00,,PT_Normal,,,,,xopMi94s3kKncvtOn6SShg,+o9SKfO920eTUWRkLEa+dg,,,N,0,0,,,2014-04-05 12:28,2014-04-05 13:21,admin,admin,
1968,141711,1749,35551,642,0,N,N,N,CP_Drtn,TT_Task,DT_FixedDUR2,TK_NotStart,A1490,Manufacture & Shipping,,1612,0,480,0,0,0,480,60,0,60,,,,2015-04-14 12:00,2015-06-20 12:00,,2014-08-12 08:00,2014-10-26 16:00,2014-08-12 08:00,2014-10-26 16:00,2014-08-12 08:00,2014-10-26 16:00,2015-04-14 12:00,2015-06-20 12:00,,PT_Normal,,,,,+ef/MJB+lk2yoLPSJcx+OA,xqnpHuQFFU6WHQvaqSNKBA,,,N,0,0,,,2014-04-05 12:28,2014-04-05 13:21,admin,admin,
1969,141712,1749,35551,642,0,N,N,N,CP_Drtn,TT_Task,DT_FixedDUR2,TK_NotStart,A1500,Clearance & Delivery,,1612,600,112,0,0,0,112,14,0,14,,,,2015-06-20 12:00,2015-07-04 12:00,,2014-10-27 08:00,2014-11-13 16:00,2014-10-27 08:00,2014-11-13 16:00,2014-10-27 08:00,2014-11-13 16:00,2015-06-20 12:00,2015-07-04 12:00,,PT_Normal,,,,,6YY5qyu/5kOj1mVL30wK5A,Ap3abXm0/0+DbB4KuUyr1A,,,N,0,0,,,2014-04-05 12:28,2014-04-05 13:21,admin,admin,
1970,141713,1749,35524,642,0,N,N,N,CP_Drtn,TT_Task,DT_FixedDUR2,TK_NotStart,PS100,Extension of MEP to & inside Offices,,264,0,720,0,0,0,720,2500090,0,2500090,,,,2015-09-16 08:00,2015-12-14 16:00,,2015-08-14 08:00,2015-11-11 16:00,2015-08-14 08:00,2015-11-11 16:00,2015-08-14 08:00,2015-11-11 16:00,2015-09-16 08:00,2015-12-14 16:00,,PT_Normal,,,,,cM7qbrQP9Ee0gagOAD5wBg,,,,N,0,0,,,2014-04-05 12:28,2014-04-05 13:21,admin,admin,
1971,141714,1749,35524,642,0,N,N,N,CP_Drtn,TT_Task,DT_FixedDUR2,TK_NotStart,PS110,Floor Finishes inside Offices,,264,264,480,0,0,0,480,3500060,0,3500060,,,,2015-12-15 08:00,2016-02-12 16:00,,2015-11-12 08:00,2016-01-10 16:00,2015-11-12 08:00,2016-01-10 16:00,2015-11-12 08:00,2016-01-10 16:00,2015-12-15 08:00,2016-02-12 16:00,,PT_Normal,,,,,oE08xdj4m0Cc7AVd4qB1Vg,cFu4pGNCcE6rNVrWQFataw,,,N,0,0,,,2014-04-05 12:28,2014-04-05 13:21,admin,admin,
1972,141715,1749,35524,642,0,N,N,N,CP_Drtn,TT_Task,DT_FixedDUR2,TK_NotStart,PS120,Permanent Utilities,,0,0,200,0,0,0,200,1000025,0,1000025,,,,2016-02-13 08:00,2016-03-08 16:00,,2016-02-13 08:00,2016-03-08 16:00,2016-02-13 08:00,2016-03-08 16:00,2016-02-13 08:00,2016-03-08 16:00,2016-02-13 08:00,2016-03-08 16:00,,PT_Normal,,,,,eguig8c3n0qN80cGLYyNfQ,RmDZoXddA0q/6d4seWyvrQ,,,Y,0,0,,,2014-04-05 12:28,2014-04-05 13:21,admin,admin,
1973,141716,1749,35526,644,0,N,N,N,CP_Drtn,TT_Task,DT_FixedDUR2,TK_NotStart,DWG100,As Built Drawings and O&M Manuals Handing Over,,32,32,176,0,0,0,176,22,0,22,,,,2016-03-07 08:00,2016-03-31 16:00,,2016-03-02 08:00,2016-03-27 16:00,2016-03-02 08:00,2016-03-27 16:00,2016-03-02 08:00,2016-03-27 16:00,2016-03-07 08:00,2016-03-31 16:00,,PT_Normal,,,,,X13TRMUWDUSleP0VHngBNQ,,,,N,0,0,,,2014-04-05 12:28,2014-04-05 13:21,admin,admin,
1974,141717,1749,35522,644,0,N,N,N,CP_Drtn,TT_Task,DT_FixedDUR2,TK_NotStart,SNAG100,Snagging & Desnagging List,,0,0,160,0,0,0,160,20,0,20,,,,2016-03-09 08:00,2016-03-31 16:00,,2016-03-09 08:00,2016-03-31 16:00,2016-03-09 08:00,2016-03-31 16:00,2016-03-09 08:00,2016-03-31 16:00,2016-03-09 08:00,2016-03-31 16:00,,PT_Normal,,,,,WuI0P97B1UuZn+IB/b+WyA,,,,Y,0,0,,,2014-04-05 12:28,2014-04-05 13:21,admin,admin,
1975,141718,1749,35517,642,0,N,N,N,CP_Drtn,TT_Mile,DT_FixedDrtn,TK_NotStart,GEN1020,SONELGAS NOC,,986,0,0,0,0,0,0,0,0,0,,,,2014-06-26 10:00,2014-06-26 10:00,,2014-02-01 08:00,2014-02-01 08:00,2014-02-01 08:00,2014-02-01 08:00,2014-02-01 08:00,2014-02-01 08:00,2014-06-26 10:00,2014-06-26 10:00,,PT_Normal,,,,,Owf8OQeTEUOmefzOAwKJmg,,,,N,0,0,,,2014-04-05 12:28,2014-04-05 12:28,admin,admin,
1976,141719,1749,35517,642,0,N,N,N,CP_Drtn,TT_Mile,DT_FixedDrtn,TK_NotStart,GEN1030,CIVIL PROTECTION NOC,,1200,0,0,0,0,0,0,0,0,0,,,,2014-08-11 08:00,2014-08-11 08:00,,2014-02-01 08:00,2014-02-01 08:00,2014-02-01 08:00,2014-02-01 08:00,2014-02-01 08:00,2014-02-01 08:00,2014-08-11 08:00,2014-08-11 08:00,,PT_Normal,,,,,s3sdRbNo80+Y060trLXr8w,lf72suxNdkub7CN+qmWxQA,,,N,0,0,,,2014-04-05 12:28,2014-04-05 12:28,admin,admin,
1977,141720,1749,35517,642,0,N,N,N,CP_Drtn,TT_Mile,DT_FixedDrtn,TK_NotStart,GEN1040,SEIAL NOC,,5000,4552,0,0,0,0,0,0,0,0,,,,2016-01-19 08:00,2016-01-19 08:00,,2014-02-01 08:00,2014-02-01 08:00,2014-02-01 08:00,2014-02-01 08:00,2014-02-01 08:00,2014-02-01 08:00,2016-01-19 08:00,2016-01-19 08:00,,PT_Normal,,,,,RM2WvYSVeUOuNtkQI4UUxQ,lf72suxNdkub7CN+qmWxQA,,,N,0,0,,,2014-04-05 12:28,2014-04-05 12:28,admin,admin,
1978,141721,1749,35517,642,0,N,N,N,CP_Drtn,TT_Mile,DT_FixedDrtn,TK_NotStart,GEN1050,ALGER TELECOM NOC,,1784,0,0,0,0,0,0,0,0,0,,,,2014-11-12 08:00,2014-11-12 08:00,,2014-02-01 08:00,2014-02-01 08:00,2014-02-01 08:00,2014-02-01 08:00,2014-02-01 08:00,2014-02-01 08:00,2014-11-12 08:00,2014-11-12 08:00,,PT_Normal,,,,,W4QwRudTCUGZysnl6Jx9yg,Q10/qFWPkUmf7cc34cxQYA,,,N,0,0,,,2014-04-05 12:28,2014-04-05 12:28,admin,admin,
1979,141722,1749,35567,642,0,N,N,N,CP_Drtn,TT_Task,DT_FixedDUR2,TK_NotStart,T&C-BL1-120,Water Supply System T & C,4456,480,216,168,0,932.66,932.66,168,11329.104777,0,11329.104777,,,,2016-01-23 08:00,2016-02-12 16:00,,2015-11-24 08:00,2015-12-14 16:00,2015-11-24 08:00,2015-12-14 16:00,2015-11-24 08:00,2015-12-14 16:00,2016-01-23 08:00,2016-02-12 16:00,,PT_Normal,,,,,+GgClzjPF0WkH3IEmurVpQ,7nSBdG4sTaG0j7zA8PPM7g,,,N,0,0,,,2014-04-05 12:28,2014-04-05 13:21,admin,admin,
1980,141723,1749,35567,642,0,N,N,N,CP_Drtn,TT_Task,DT_FixedDUR2,TK_NotStart,T&C-BL1-110,Drainage System T & C,4456,656,656,168,0,932.66,932.66,168,12867.943448,0,12867.943448,,,,2016-02-14 08:00,2016-03-05 16:00,,2015-11-24 08:00,2015-12-14 16:00,2015-11-24 08:00,2015-12-14 16:00,2015-11-24 08:00,2015-12-14 16:00,2016-02-14 08:00,2016-03-05 16:00,,PT_Normal,,,,,PLrYD1sy0Eec+vwt3hQFNA,LlM00TFuRVKd8D8T4ldbGQ,,,N,0,0,,,2014-04-05 12:28,2014-04-05 13:21,admin,admin,
1981,141724,1749,35567,642,0,N,N,N,CP_Drtn,TT_Task,DT_FixedDUR2,TK_NotStart,T&C-BL1-130,AC  System T & C,4457,680,680,168,0,16,16,168,52809.182672,0,52809.182672,,,,2016-02-17 08:00,2016-03-08 16:00,,2015-11-24 08:00,2015-12-14 16:00,2015-11-24 08:00,2015-12-14 16:00,2015-11-24 08:00,2015-12-14 16:00,2016-02-17 08:00,2016-03-08 16:00,,PT_Normal,,,,,52Lpx3BW2Ums+UARhtNEfw,w1sEpBtdSUq1Pp7YT3IRbw,,,N,0,0,,,2014-04-05 12:28,2014-04-05 13:21,admin,admin,
1982,141725,1749,35567,642,0,N,N,N,CP_Drtn,TT_Task,DT_FixedDUR2,TK_NotStart,T&C-BL1-140,Electrical System T & C,4455,336,336,168,0,1008,1008,168,47581.028128,0,47581.028128,,,,2016-02-17 08:00,2016-03-08 16:00,,2016-01-06 08:00,2016-01-26 16:00,2016-01-06 08:00,2016-01-26 16:00,2016-01-06 08:00,2016-01-26 16:00,2016-02-17 08:00,2016-03-08 16:00,,PT_Normal,,,,,K8stI3SUxUyPVzfDux2hFQ,GTXCSjIsQ0is+nBNltq8rg,,,N,0,0,,,2014-04-05 12:28,2014-04-05 13:21,admin,admin,
1983,141726,1749,35567,642,0,N,N,N,CP_Drtn,TT_Task,DT_FixedDUR2,TK_NotStart,T&C-BL1-100,Fire Fighting System T & C,4456,680,680,168,0,832,832,168,10770.935072,0,10770.935072,,,,2016-02-17 08:00,2016-03-08 16:00,,2015-11-24 08:00,2015-12-14 16:00,2015-11-24 08:00,2015-12-14 16:00,2015-11-24 08:00,2015-12-14 16:00,2016-02-17 08:00,2016-03-08 16:00,,PT_Normal,,,,,lTxh3lGCbU+qLQwp+/V7mA,DhXGgkZFTUazxcmHf9mttw,,,N,0,0,,,2014-04-05 12:28,2014-04-05 13:21,admin,admin,
1984,141727,1749,35541,642,0,N,N,N,CP_Drtn,TT_Task,DT_FixedDUR2,TK_NotStart,T&C-BL2-120,Water Supply System T & C,4456,264,0,200,0,1060.66,1060.66,200,11333.104777,0,11333.104777,,,,2016-01-19 08:00,2016-02-12 16:00,,2015-12-17 08:00,2016-01-10 16:00,2015-12-17 08:00,2016-01-10 16:00,2015-12-17 08:00,2016-01-10 16:00,2016-01-19 08:00,2016-02-12 16:00,,PT_Normal,,,,,Gzp4UJORWkiJ25OJmyrdiA,De7zbgMLTGeaWZuLmF57qQ,,,N,0,0,,,2014-04-05 12:28,2014-04-05 13:21,admin,admin,
1985,141728,1749,35541,642,0,N,N,N,CP_Drtn,TT_Task,DT_FixedDUR2,TK_NotStart,T&C-BL2-110,Drainage System T & C,4456,488,488,200,0,1060.66,1060.66,200,12893.912658,0,12893.912658,,,,2016-02-10 08:00,2016-03-05 16:00,,2015-12-11 08:00,2016-01-04 16:00,2015-12-11 08:00,2016-01-04 16:00,2015-12-11 08:00,2016-01-04 16:00,2016-02-10 08:00,2016-03-05 16:00,,PT_Normal,,,,,iDAV7TL+oUOchuUGC1Cplg,3eQUz/v8TUeigCS6gc0ZcQ,,,N,0,0,,,2014-04-05 12:28,2014-04-05 13:21,admin,admin,
1986,141729,1749,35541,642,0,N,N,N,CP_Drtn,TT_Task,DT_FixedDUR2,TK_NotStart,T&C-BL2-130,AC  System T & C,4457,368,368,200,0,16,16,200,53032.475033,0,53032.475033,,,,2016-02-13 08:00,2016-03-08 16:00,,2015-12-29 08:00,2016-01-22 16:00,2015-12-29 08:00,2016-01-22 16:00,2015-12-29 08:00,2016-01-22 16:00,2016-02-13 08:00,2016-03-08 16:00,,PT_Normal,,,,,WrvtduWtRk28ikQU+7PTcA,/j8QIP+BTN24iMLXiyQjDQ,,,N,0,0,,,2014-04-05 12:28,2014-04-05 13:21,admin,admin,
1987,141730,1749,35541,642,0,N,N,N,CP_Drtn,TT_Task,DT_FixedDUR2,TK_NotStart,T&C-BL2-140,Electrical System T & C,4455,200,200,200,0,1200,1200,200,47585.028128,0,47585.028128,,,,2016-02-13 08:00,2016-03-08 16:00,,2016-01-19 08:00,2016-02-12 16:00,2016-01-19 08:00,2016-02-12 16:00,2016-01-19 08:00,2016-02-12 16:00,2016-02-13 08:00,2016-03-08 16:00,,PT_Normal,,,,,xqu4Txc0ek+YKdfaY1DOgw,X8PnnLZHRkyPC7Pt1QjbKA,,,N,0,0,,,2014-04-05 12:28,2014-04-05 13:21,admin,admin,
1988,141731,1749,35541,642,0,N,N,N,CP_Drtn,TT_Task,DT_FixedDUR2,TK_NotStart,T&C-BL2-100,Fire Fighting System T & C,4456,488,488,200,0,1024,1024,200,10774.935072,0,10774.935072,,,,2016-02-13 08:00,2016-03-08 16:00,,2015-12-14 08:00,2016-01-07 16:00,2015-12-14 08:00,2016-01-07 16:00,2015-12-14 08:00,2016-01-07 16:00,2016-02-13 08:00,2016-03-08 16:00,,PT_Normal,,,,,dAoA0iYLq0eRL10Dco6/gA,QYGxqIyYTgKwua1Cv6kxXg,,,N,0,0,,,2014-04-05 12:28,2014-04-05 13:21,admin,admin,
1989,141732,1749,35545,642,0,N,N,N,CP_Drtn,TT_Task,DT_FixedDUR2,TK_NotStart,T&C-BL3-110,Water Supply System T & C,4456,0,0,240,0,1220.6,1220.6,240,11338.104777,0,11338.104777,,,,2016-01-31 08:00,2016-02-29 16:00,,2016-01-31 08:00,2016-02-29 16:00,2016-01-31 08:00,2016-02-29 16:00,2016-01-31 08:00,2016-02-29 16:00,2016-01-31 08:00,2016-02-29 16:00,,PT_Normal,,,,,xDdDR7q3wU2uYNHHd9EXaQ,vS5KxfJyQqGIB4e4wdcP/g,,,Y,0,0,,,2014-04-05 12:28,2014-04-05 13:21,admin,admin,
1990,141733,1749,35545,642,0,N,N,N,CP_Drtn,TT_Task,DT_FixedDUR2,TK_NotStart,T&C-BL3-100,Drainage System T & C,4456,88,88,240,0,1220.66,1220.66,240,12898.912658,0,12898.912658,,,,2016-02-05 08:00,2016-03-05 16:00,,2016-01-25 08:00,2016-02-23 16:00,2016-01-25 08:00,2016-02-23 16:00,2016-01-25 08:00,2016-02-23 16:00,2016-02-05 08:00,2016-03-05 16:00,,PT_Normal,,,,,vvrWk+HsU0+xpPImfD7hEg,eixHw+NuSsqr9pj0Dydsgg,,,N,0,0,,,2014-04-05 12:28,2014-04-05 13:21,admin,admin,
1991,141734,1749,35545,642,0,N,N,N,CP_Drtn,TT_Task,DT_FixedDUR2,TK_NotStart,T&C-BL3-130,AC  System T & C,4457,16,16,240,0,16,16,240,53037.475033,0,53037.475033,,,,2016-03-02 08:00,2016-03-31 16:00,,2016-02-29 08:00,2016-03-29 16:00,2016-02-29 08:00,2016-03-29 16:00,2016-02-29 08:00,2016-03-29 16:00,2016-03-02 08:00,2016-03-31 16:00,,PT_Normal,,,,,4U690cdYp0Ky1W+HBn/ngg,Ma0Qh4vkQ3u5+xFJ9/pKvQ,,,N,0,0,,,2014-04-05 12:28,2014-04-05 13:21,admin,admin,
1992,141735,1749,35545,642,0,N,N,N,CP_Drtn,TT_Task,DT_FixedDUR2,TK_NotStart,T&C-BL3-140,Electrical System T & C,4455,0,0,240,0,1440,1440,240,47590.028128,0,47590.028128,,,,2016-03-02 08:00,2016-03-31 16:00,,2016-03-02 08:00,2016-03-31 16:00,2016-03-02 08:00,2016-03-31 16:00,2016-03-02 08:00,2016-03-31 16:00,2016-03-02 08:00,2016-03-31 16:00,,PT_Normal,,,,,N0iHUXZiAEmVTQVxNRRcvA,eGH0evmORhmhSB+mt0+l5g,,,Y,0,0,,,2014-04-05 12:28,2014-04-05 13:21,admin,admin,
1993,141736,1749,35545,642,0,N,N,N,CP_Drtn,TT_Task,DT_FixedDUR2,TK_NotStart,T&C-BL3-120,Fire Fighting System T & C,4456,48,48,240,0,1264,1264,240,10779.935072,0,10779.935072,,,,2016-02-12 08:00,2016-03-12 16:00,,2016-02-06 08:00,2016-03-06 16:00,2016-02-06 08:00,2016-03-06 16:00,2016-02-06 08:00,2016-03-06 16:00,2016-02-12 08:00,2016-03-12 16:00,,PT_Normal,,,,,5Tntq39OhkmBQrvBlxbHUQ,XBxeK8sBRbeRX9s+lZl8Sg,,,N,0,0,,,2014-04-05 12:28,2014-04-05 13:21,admin,admin,
1994,141737,1749,36218,642,0,N,N,N,CP_Drtn,TT_Task,DT_FixedDUR2,TK_NotStart,BL1-SUBST-GF-1010,Installation of Conduits and Accessories,,484,0,72,0,54,54,72,533.879385,0,533.879385,,,,2015-09-12 12:00,2015-09-21 12:00,,2015-07-14 08:00,2015-07-22 16:00,2015-07-14 08:00,2015-07-22 16:00,2015-07-14 08:00,2015-07-22 16:00,2015-09-12 12:00,2015-09-21 12:00,,PT_Normal,,,,,JK5hBpH2TEOg2iiUhkeAuw,Rx+3YmxTSru0itYOjJHPqg,,,N,0,0,,,2014-04-05 12:28,2014-04-05 13:21,admin,admin,
1995,141738,1749,36218,642,0,N,N,N,CP_Drtn,TT_Task,DT_FixedDUR2,TK_NotStart,BL1-SUBST-GF-1020,Cable Ladder / Tray / Trunk Installation in Transformer Rooms,,696,0,108,0,108,108,108,6148.781164,0,6148.781164,,,,2015-10-09 08:00,2015-10-22 12:00,,2015-07-14 08:00,2015-07-27 12:00,2015-07-14 08:00,2015-07-27 12:00,2015-07-14 08:00,2015-07-27 12:00,2015-10-09 08:00,2015-10-22 12:00,,PT_Normal,,,,,GsuQZlgv6UG33s8135kqCQ,DeDBJJtiRs2Qp5wrp/bC5A,,,N,0,0,,,2014-04-05 12:28,2014-04-05 13:21,admin,admin,
1996,141739,1749,36218,642,0,N,N,N,CP_Drtn,TT_Task,DT_FixedDUR2,TK_NotStart,BL1-SUBST-GF-1150,Installation of MV Switchgear,,652,0,180,0,1886,1886,180,150329.765931,0,150329.765931,,,,2015-11-09 08:00,2015-12-01 12:00,,2015-08-19 12:00,2015-09-10 16:00,2015-08-19 12:00,2015-09-10 16:00,2015-08-19 12:00,2015-09-10 16:00,2015-11-09 08:00,2015-12-01 12:00,,PT_Normal,,,,,oBhY4iksXEeMaajHDuWR2g,gBhwuAlOQR+RZU0rhZOSNg,,,N,0,0,,,2014-04-05 12:28,2014-04-05 13:21,admin,admin,
1997,141740,1749,36218,642,0,N,N,N,CP_Drtn,TT_Task,DT_FixedDUR2,TK_NotStart,BL1-SUBST-GF-1220,Installation of Transformers,,484,0,120,0,1230,1230,120,505889.14912,0,505889.14912,,,,2015-10-19 08:00,2015-11-02 16:00,,2015-08-19 12:00,2015-09-03 12:00,2015-08-19 12:00,2015-09-03 12:00,2015-08-19 12:00,2015-09-03 12:00,2015-10-19 08:00,2015-11-02 16:00,,PT_Normal,,,,,YzBcGQSztkeUjIVWEIOywA,yEwpQMPJT8KGtSwZPHU3ZQ,,,N,0,0,,,2014-04-05 12:28,2014-04-05 13:21,admin,admin,
1998,141741,1749,36218,642,0,N,N,N,CP_Drtn,TT_Task,DT_FixedDUR2,TK_NotStart,BL1-SUBST-GF-1160,Installation of Generators,,736,0,144,0,1694,1694,144,214836.120132,0,214836.120132,,,,2015-11-19 12:00,2015-12-07 12:00,,2015-08-19 12:00,2015-09-06 12:00,2015-08-19 12:00,2015-09-06 12:00,2015-08-19 12:00,2015-09-06 12:00,2015-11-19 12:00,2015-12-07 12:00,,PT_Normal,,,,,EmfLpQCg1kSGt1ZJFAQvBw,245q3c7LSH+Cy2qBtnAtiw,,,N,0,0,,,2014-04-05 12:28,2014-04-05 13:21,admin,admin,
1999,141742,1749,36218,642,0,N,N,N,CP_Drtn,TT_Task,DT_FixedDUR2,TK_NotStart,BL1-SUBST-GF-1140,Installation of LV Switchgears,,488,0,216,0,3480,3480,216,273147.275802,0,273147.275802,,,,2015-10-03 08:00,2015-10-29 16:00,,2015-08-03 08:00,2015-08-29 16:00,2015-08-03 08:00,2015-08-29 16:00,2015-08-03 08:00,2015-08-29 16:00,2015-10-03 08:00,2015-10-29 16:00,,PT_Normal,,,,,m141Ct0EnUqvgH9a1zYGPQ,HGUDuW10SGyQFTu1kArfEA,,,N,0,0,,,2014-04-05 12:28,2014-04-05 13:21,admin,admin,
2000,141743,1749,36218,642,0,N,N,N,CP_Drtn,TT_Task,DT_FixedDUR2,TK_NotStart,BL1-SUBST-GF-1080,HV Cabling In MV Room,,876,224,108,0,114,114,108,1129.005666,0,1129.005666,,,,2015-11-10 12:00,2015-11-23 16:00,,2015-07-24 08:00,2015-08-06 12:00,2015-07-24 08:00,2015-08-06 12:00,2015-07-24 08:00,2015-08-06 12:00,2015-11-10 12:00,2015-11-23 16:00,,PT_Normal,,,,,T0JcJr02y0+lTETt1tgxVQ,FM90dTzYSGyo79T8Paatgw,,,N,0,0,,,2014-04-05 12:28,2014-04-05 13:21,admin,admin,
2001,141744,1749,36218,642,0,N,N,N,CP_Drtn,TT_Mile,DT_FixedDrtn,TK_NotStart,BL1-SUBST-GF-1000,"Access to Room (Plastered, Painted, Plinth/ Floor Paint Beneath Eqt & Doors)",,484,0,0,0,0,0,0,0,0,0,,,,2015-09-11 12:00,2015-09-11 12:00,,2015-07-13 08:00,2015-07-13 08:00,2015-07-13 08:00,2015-07-13 08:00,2015-07-13 08:00,2015-07-13 08:00,2015-09-11 12:00,2015-09-11 12:00,,PT_Normal,,,,,Hr8k/RZh7UGmzJGKQIpeLg,DZ/1zEiHTVuHRcNNV2+iuA,,,N,0,0,,,2014-04-05 12:28,2014-04-05 12:28,admin,admin,
2002,141745,1749,36218,642,0,N,N,N,CP_Drtn,TT_Task,DT_FixedDUR2,TK_NotStart,BL1-SUBST-GF-1030,Cable Ladder / Tray / Trunk Installation in Generator Rooms,,992,0,108,0,108,108,108,6328.5,0,6328.5,,,,2015-11-15 08:00,2015-11-28 12:00,,2015-07-14 08:00,2015-07-27 12:00,2015-07-14 08:00,2015-07-27 12:00,2015-07-14 08:00,2015-07-27 12:00,2015-11-15 08:00,2015-11-28 12:00,,PT_Normal,,,,,g3k5eABLWU2U2BPNKIhjew,bG0yrUssTMWwWqkUp9RTSQ,,,N,0,0,,,2014-04-05 12:28,2014-04-05 13:21,admin,admin,
2003,141746,1749,36218,642,0,N,N,N,CP_Drtn,TT_Task,DT_FixedDUR2,TK_NotStart,BL1-SUBST-GF-1040,Cable Ladder / Tray / Trunk Installation in LV Switchgear Rooms,,960,0,108,0,189,189,108,9846.5,0,9846.5,,,,2015-11-11 08:00,2015-11-24 12:00,,2015-07-14 08:00,2015-07-27 12:00,2015-07-14 08:00,2015-07-27 12:00,2015-07-14 08:00,2015-07-27 12:00,2015-11-11 08:00,2015-11-24 12:00,,PT_Normal,,,,,9c2zpX4WHEegy7tTMx8hrg,6NQA8RA/Sn2ZHSCuf6HBJw,,,N,0,0,,,2014-04-05 12:28,2014-04-05 13:21,admin,admin,
2004,141747,1749,36218,642,0,N,N,N,CP_Drtn,TT_Task,DT_FixedDUR2,TK_NotStart,BL1-SUBST-GF-1050,Cable Ladder / Tray / Trunk Installation in MV Switchgear Room,,876,0,108,0,135.07,135.07,108,6719.683376,0,6719.683376,,,,2015-10-31 12:00,2015-11-13 16:00,,2015-07-14 08:00,2015-07-27 12:00,2015-07-14 08:00,2015-07-27 12:00,2015-07-14 08:00,2015-07-27 12:00,2015-10-31 12:00,2015-11-13 16:00,,PT_Normal,,,,,+OEn0jjQpUetZLLMIlf1bg,n9neB1sxQEmXz/gNQRlMIA,,,N,0,0,,,2014-04-05 12:28,2014-04-05 13:21,admin,admin,
2005,141748,1749,36218,642,0,N,N,N,CP_Drtn,TT_Task,DT_FixedDUR2,TK_NotStart,BL1-SUBST-GF-1090,HV / LV Cabling In Transformer Rooms,,696,212,108,0,114,114,108,1129.005666,0,1129.005666,,,,2015-10-19 08:00,2015-11-01 12:00,,2015-07-24 08:00,2015-08-06 12:00,2015-07-24 08:00,2015-08-06 12:00,2015-07-24 08:00,2015-08-06 12:00,2015-10-19 08:00,2015-11-01 12:00,,PT_Normal,,,,,K448wmJ6i0m/1q09fELkAw,uZml97VhTCWQCUR4BdgW8g,,,N,0,0,,,2014-04-05 12:28,2014-04-05 13:21,admin,admin,
2006,141749,1749,36218,642,0,N,N,N,CP_Drtn,TT_Task,DT_FixedDUR2,TK_NotStart,BL1-SUBST-GF-1100,LV Cabling In Generator Rooms,,992,200,180,0,190.59,190.59,180,2488.008594,0,2488.008594,,,,2015-11-25 08:00,2015-12-17 12:00,,2015-07-24 08:00,2015-08-15 12:00,2015-07-24 08:00,2015-08-15 12:00,2015-07-24 08:00,2015-08-15 12:00,2015-11-25 08:00,2015-12-17 12:00,,PT_Normal,,,,,3fabEpWGzU+nHjt2yFLUMg,D1uRUbKuRPqoLlEEpVdU8Q,,,N,0,0,,,2014-04-05 12:28,2014-04-05 13:21,admin,admin,
2007,141750,1749,36218,642,0,N,N,N,CP_Drtn,TT_Task,DT_FixedDUR2,TK_NotStart,BL1-SUBST-GF-1110,LV Cabling In LV Switchgear Rooms,,960,472,180,0,762,762,180,10826.90655,0,10826.90655,,,,2015-11-21 08:00,2015-12-13 12:00,,2015-07-24 08:00,2015-08-15 12:00,2015-07-24 08:00,2015-08-15 12:00,2015-07-24 08:00,2015-08-15 12:00,2015-11-21 08:00,2015-12-13 12:00,,PT_Normal,,,,,CfG/WbEJ0UWZEZJBockQjw,Yw9l7fIiQ7Cv1yADrdFD1Q,,,N,0,0,,,2014-04-05 12:28,2014-04-05 13:21,admin,admin,
2008,141751,1749,36218,642,0,N,N,N,CP_Drtn,TT_Task,DT_FixedDUR2,TK_NotStart,BL1-SUBST-GF-1240,Cable Glanding & Termination in Transformer Rooms,,484,0,144,0,154,154,144,13665.959795,0,13665.959795,,,,2015-10-24 08:00,2015-11-10 16:00,,2015-08-24 12:00,2015-09-11 12:00,2015-08-24 12:00,2015-09-11 12:00,2015-08-24 12:00,2015-09-11 12:00,2015-10-24 08:00,2015-11-10 16:00,,PT_Normal,,,,,8CkEjdo0XkWgdvdjnoh0SQ,9mYI7wn8TNS+ShmVX1BQtg,,,N,0,0,,,2014-04-05 12:28,2014-04-05 13:21,admin,admin,
2009,141752,1749,36218,642,0,N,N,N,CP_Drtn,TT_Task,DT_FixedDUR2,TK_NotStart,BL1-SUBST-GF-1170,Cable Glanding & Termination in Generator Rooms,,792,304,144,0,212,212,144,10809.257171,0,10809.257171,,,,2015-12-01 12:00,2015-12-19 12:00,,2015-08-24 12:00,2015-09-11 12:00,2015-08-24 12:00,2015-09-11 12:00,2015-08-24 12:00,2015-09-11 12:00,2015-12-01 12:00,2015-12-19 12:00,,PT_Normal,,,,,L6EJdeWRB0Kr2civeKMG3g,3wLrFy3XTaqxcDjifMWLAA,,,N,0,0,,,2014-04-05 12:28,2014-04-05 13:21,admin,admin,
2010,141753,1749,36218,642,0,N,N,N,CP_Drtn,TT_Task,DT_FixedDUR2,TK_NotStart,BL1-SUBST-GF-1250,Cable Glanding & Termination in LV Switchgear Rooms,,488,0,188,0,435,435,188,13899.382368,0,13899.382368,,,,2015-11-26 08:00,2015-12-19 12:00,,2015-09-26 08:00,2015-10-19 12:00,2015-09-26 08:00,2015-10-19 12:00,2015-09-26 08:00,2015-10-19 12:00,2015-11-26 08:00,2015-12-19 12:00,,PT_Normal,,,,,Dw/++h55nEKFAdbnHKDMSQ,ttsmX4wLRp2SxuI2bOXLhQ,,,N,0,0,,,2014-04-05 12:28,2014-04-05 13:21,admin,admin,
2011,141754,1749,36218,642,0,N,N,N,CP_Drtn,TT_Task,DT_FixedDUR2,TK_NotStart,BL1-SUBST-GF-1180,Cable Glanding & Termination in MV Switchgear Rooms,,652,168,144,0,236,236,144,7395.897495,0,7395.897495,,,,2015-11-15 12:00,2015-12-03 12:00,,2015-08-26 08:00,2015-09-12 16:00,2015-08-26 08:00,2015-09-12 16:00,2015-08-26 08:00,2015-09-12 16:00,2015-11-15 12:00,2015-12-03 12:00,,PT_Normal,,,,,e8EfA9abUEizM19qU9YBTQ,EvZnrbGVQoysNz0GWial9Q,,,N,0,0,,,2014-04-05 12:28,2014-04-05 13:21,admin,admin,
2012,141755,1749,36218,642,0,N,N,N,CP_Drtn,TT_Task,DT_FixedDUR2,TK_NotStart,BL1-SUBST-GF-1260,Pre Commissioning Tests of Transformers,,484,0,180,0,154,154,180,2055.174863,0,2055.174863,,,,2015-11-03 08:00,2015-11-25 12:00,,2015-09-03 12:00,2015-09-25 16:00,2015-09-03 12:00,2015-09-25 16:00,2015-09-03 12:00,2015-09-25 16:00,2015-11-03 08:00,2015-11-25 12:00,,PT_Normal,,,,,sIt4qDbZp0220Ez03rrlnQ,daMmcjpgT2CnFYcki/QQXQ,,,N,0,0,,,2014-04-05 12:28,2014-04-05 13:21,admin,admin,
2013,141756,1749,36218,642,0,N,N,N,CP_Drtn,TT_Task,DT_FixedDUR2,TK_NotStart,BL1-SUBST-GF-1300,Pre Commissioning Tests of Generators,,484,180,180,0,212,212,180,1628.915822,0,1628.915822,,,,2016-01-21 12:00,2016-02-12 16:00,,2015-11-22 08:00,2015-12-14 12:00,2015-11-22 08:00,2015-12-14 12:00,2015-11-22 08:00,2015-12-14 12:00,2016-01-21 12:00,2016-02-12 16:00,,PT_Normal,,,,,HMPH9cCE9k+Yvnp0ZCyzWw,Izy6h9FORJ6LR+rz/nb/pQ,,,N,0,0,,,2014-04-05 12:28,2014-04-05 13:21,admin,admin,
2014,141757,1749,36218,642,0,N,N,N,CP_Drtn,TT_Task,DT_FixedDUR2,TK_NotStart,BL1-SUBST-GF-1290,Pre Commissioning Tests of LV Switchgears,,484,0,180,0,435,435,180,2088.048311,0,2088.048311,,,,2015-12-24 08:00,2016-01-15 12:00,,2015-10-24 12:00,2015-11-15 16:00,2015-10-24 12:00,2015-11-15 16:00,2015-10-24 12:00,2015-11-15 16:00,2015-12-24 08:00,2016-01-15 12:00,,PT_Normal,,,,,j2NlWEb3Y0+KFB0mwoybkQ,q82xsHJdTKW78zkkmgL2Jw,,,N,0,0,,,2014-04-05 12:28,2014-04-05 13:21,admin,admin,
2015,141758,1749,36218,642,0,N,N,N,CP_Drtn,TT_Task,DT_FixedDUR2,TK_NotStart,BL1-SUBST-GF-1270,Pre Commissioning Tests of MV Switchgears,,484,0,180,0,236,236,180,1120.473161,0,1120.473161,,,,2015-11-25 12:00,2015-12-17 16:00,,2015-09-26 08:00,2015-10-18 12:00,2015-09-26 08:00,2015-10-18 12:00,2015-09-26 08:00,2015-10-18 12:00,2015-11-25 12:00,2015-12-17 16:00,,PT_Normal,,,,,mejrvK/Zo0WpXQXcap54xw,zuTXcLgxRJm9oqtClvV69A,,,N,0,0,,,2014-04-05 12:28,2014-04-05 13:21,admin,admin,
2016,141759,1749,36218,642,0,N,N,N,CP_Drtn,TT_Task,DT_FixedDUR2,TK_NotStart,BL1-SUBST-GF-1070,Wiring for Lighting & Power,,852,368,36,0,181,181,36,157.909424,0,157.909424,,,,2015-11-06 12:00,2015-11-10 16:00,,2015-07-23 08:00,2015-07-27 12:00,2015-07-23 08:00,2015-07-27 12:00,2015-07-23 08:00,2015-07-27 12:00,2015-11-06 12:00,2015-11-10 16:00,,PT_Normal,,,,,L7DP42uCI0iVtxQ20B4JfA,Ar4WoOVER9uyWWLIiGdbgw,,,N,0,0,,,2014-04-05 12:28,2014-04-05 13:21,admin,admin,
2017,141760,1749,36218,642,0,N,N,N,CP_Drtn,TT_Task,DT_FixedDUR2,TK_NotStart,BL1-SUBST-GF-1190,Installation of Fuel Tank for Generator,,736,0,120,0,473.1,473.1,120,6685.022583,0,6685.022583,,,,2015-11-29 12:00,2015-12-14 12:00,,2015-08-29 12:00,2015-09-13 12:00,2015-08-29 12:00,2015-09-13 12:00,2015-08-29 12:00,2015-09-13 12:00,2015-11-29 12:00,2015-12-14 12:00,,PT_Normal,,,,,E9vmHBCpTEeCm7mRjRWDNQ,PpTiHCTgTz+gHEwfpkRHgQ,,,N,0,0,,,2014-04-05 12:28,2014-04-05 13:21,admin,admin,
2018,141761,1749,36218,642,0,N,N,N,CP_Drtn,TT_Task,DT_FixedDUR2,TK_NotStart,BL1-SUBST-GF-1210,Installation of Fuel  Pump For Generator,,740,4,60,0,51.3,51.3,60,5541.197067,0,5541.197067,,,,2015-12-05 08:00,2015-12-12 12:00,,2015-09-03 12:00,2015-09-10 16:00,2015-09-03 12:00,2015-09-10 16:00,2015-09-03 12:00,2015-09-10 16:00,2015-12-05 08:00,2015-12-12 12:00,,PT_Normal,,,,,45QIzrRYakyoqi6xk7/FAw,ksGSbtvOT6efOZzhEr8wOg,,,N,0,0,,,2014-04-05 12:28,2014-04-05 13:21,admin,admin,
2019,141762,1749,36218,642,0,N,N,N,CP_Drtn,TT_Task,DT_FixedDUR2,TK_NotStart,BL1-SUBST-GF-1120,Fuel Pipe Installation,,996,260,120,0,242.25,242.25,120,3397.677791,0,3397.677791,,,,2015-11-29 12:00,2015-12-14 12:00,,2015-07-28 08:00,2015-08-11 16:00,2015-07-28 08:00,2015-08-11 16:00,2015-07-28 08:00,2015-08-11 16:00,2015-11-29 12:00,2015-12-14 12:00,,PT_Normal,,,,,MhsRucCxk0qCvjjQ6O7CtA,GNetFWOvSRqoS0H6VoQfAA,,,N,0,0,,,2014-04-05 12:28,2014-04-05 13:21,admin,admin,
2020,141763,1749,36218,642,0,N,N,N,CP_Drtn,TT_Task,DT_FixedDUR2,TK_NotStart,BL1-SUBST-GF-1230,Fuel Pipe Connection of Generator / Pump / Fuel Tank,,736,248,36,0,42.75,42.75,36,183.1124,0,183.1124,,,,2015-12-15 08:00,2015-12-19 12:00,,2015-09-14 08:00,2015-09-18 12:00,2015-09-14 08:00,2015-09-18 12:00,2015-09-14 08:00,2015-09-18 12:00,2015-12-15 08:00,2015-12-19 12:00,,PT_Normal,,,,,A1vKZ1WIkUKEq7kdu/dQcg,BP0Ok52mTg6cfWLwU6bJDQ,,,N,0,0,,,2014-04-05 12:28,2014-04-05 13:21,admin,admin,
2021,141764,1749,36218,642,0,N,N,N,CP_Drtn,TT_Task,DT_FixedDUR2,TK_NotStart,BL1-SUBST-GF-1130,Extract fan Installation for Transformer Ventilation,,968,480,180,0,1330,1330,180,11614.773519,0,11614.773519,,,,2015-11-27 08:00,2015-12-19 12:00,,2015-07-29 08:00,2015-08-20 12:00,2015-07-29 08:00,2015-08-20 12:00,2015-07-29 08:00,2015-08-20 12:00,2015-11-27 08:00,2015-12-19 12:00,,PT_Normal,,,,,+rsagS7fOEyFAl1paPZSYQ,U8NACL2FTt+xu8F9qa3xcw,,,N,0,0,,,2014-04-05 12:28,2014-04-05 13:21,admin,admin,
2022,141765,1749,36218,642,0,N,N,N,CP_Drtn,TT_Task,DT_FixedDUR2,TK_NotStart,BL1-SUBST-GF-1200,Installation of Emergency Central Battery Panel,,488,0,216,0,1282,1282,216,22923.356477,0,22923.356477,,,,2015-10-30 08:00,2015-11-25 16:00,,2015-08-30 08:00,2015-09-25 16:00,2015-08-30 08:00,2015-09-25 16:00,2015-08-30 08:00,2015-09-25 16:00,2015-10-30 08:00,2015-11-25 16:00,,PT_Normal,,,,,VzlfCJYDBkygj5OzyV529g,E8od+CrUSCSCeci2XAUAqA,,,N,0,0,,,2014-04-05 12:28,2014-04-05 13:21,admin,admin,
2023,141766,1749,36218,642,0,N,N,N,CP_Drtn,TT_Task,DT_FixedDUR2,TK_NotStart,BL1-SUBST-GF-1280,MEP Final Fix,,488,4,36,0,23.75,23.75,36,7.787345,0,7.787345,,,,2015-12-19 12:00,2015-12-23 16:00,,2015-10-19 12:00,2015-10-23 16:00,2015-10-19 12:00,2015-10-23 16:00,2015-10-19 12:00,2015-10-23 16:00,2015-12-19 12:00,2015-12-23 16:00,,PT_Normal,,,,,gjhrfW4YQUSI4lovWqzuyw,JvY3vaX8SR6oo+uOtjwnHg,,,N,0,0,,,2014-04-05 12:28,2014-04-05 13:21,admin,admin,
2024,141767,1749,36218,642,0,N,N,N,CP_Drtn,TT_Task,DT_FixedDUR2,TK_NotStart,BL1-SUBST-GF-1060,Installation of MEP High Level Services,,484,0,108,0,76,76,108,23.362034,0,23.362034,,,,2015-09-17 12:00,2015-09-30 16:00,,2015-07-19 08:00,2015-08-01 12:00,2015-07-19 08:00,2015-08-01 12:00,2015-07-19 08:00,2015-08-01 12:00,2015-09-17 12:00,2015-09-30 16:00,,PT_Normal,,,,,FLIdGKKucEinsDrQp1cMaA,qcmdtlqDQZKlwitv51fSqg,,,N,0,0,,,2014-04-05 12:28,2014-04-05 13:21,admin,admin,
2025,141768,1749,36414,642,0,N,N,N,CP_Drtn,TT_Task,DT_FixedDUR2,TK_NotStart,BL3-MEP-PL-3F-2030,Floor Drain Installation,,1168,104,48,0,6,6,48,554.143324,0,554.143324,,,,2015-12-19 08:00,2015-12-24 16:00,,2015-07-26 08:00,2015-07-31 16:00,2015-07-26 08:00,2015-07-31 16:00,2015-07-26 08:00,2015-07-31 16:00,2015-12-19 08:00,2015-12-24 16:00,,PT_Normal,,,,,J969orH+TEm/59tO/kyFBg,dxnkbS6SQBWqOf1jcWmQEg,,,N,0,0,,,2014-04-05 12:28,2014-04-05 13:21,admin,admin,
2026,141769,1749,36414,642,0,N,N,N,CP_Drtn,TT_Task,DT_FixedDUR2,TK_NotStart,BL3-MEP-PL-3F-2000,High Level Water Supply Pipes and Fittings Installation,,176,0,168,0,150.02,150.02,168,1329.597866,0,1329.597866,,,,2015-06-22 08:00,2015-07-12 16:00,,2015-05-31 08:00,2015-06-20 16:00,2015-05-31 08:00,2015-06-20 16:00,2015-05-31 08:00,2015-06-20 16:00,2015-06-22 08:00,2015-07-12 16:00,,PT_Normal,,,,,t3OznCqgoUGLAcDpnFgz/g,M7hnhFpiSdODRUeOTEoDJg,,,N,0,0,,,2014-04-05 12:28,2014-04-05 13:21,admin,admin,
2027,141770,1749,36414,642,0,N,N,N,CP_Drtn,TT_Task,DT_FixedDUR2,TK_NotStart,BL3-MEP-PL-3F-2010,High Level Drainage Pipes Installation,,176,0,168,0,244.38,244.38,168,6583.525267,0,6583.525267,,,,2015-06-22 08:00,2015-07-12 16:00,,2015-05-31 08:00,2015-06-20 16:00,2015-05-31 08:00,2015-06-20 16:00,2015-05-31 08:00,2015-06-20 16:00,2015-06-22 08:00,2015-07-12 16:00,,PT_Normal,,,,,3yyXpHJaNkipnVKW1WqqXA,JjA+fUhhRs2zX9vZNsIo8g,,,N,0,0,,,2014-04-05 12:28,2014-04-05 13:21,admin,admin,
2028,141771,1749,36414,642,0,N,N,N,CP_Drtn,TT_Task,DT_FixedDUR2,TK_NotStart,BL3-MEP-PL-3F-2020,Water Supply Pipes Pressure Test,4456,464,120,48,0,48,48,48,151.744312,0,151.744312,,,,2015-08-18 08:00,2015-08-23 16:00,,2015-06-21 08:00,2015-06-26 16:00,2015-06-21 08:00,2015-06-26 16:00,2015-06-21 08:00,2015-06-26 16:00,2015-08-18 08:00,2015-08-23 16:00,,PT_Normal,,,,,i1gI+5y2x0WlyiAasYKCGw,44WuUm+rS9GeS8syn1q52g,,,N,0,0,,,2014-04-05 12:28,2014-04-05 13:21,admin,admin,
2029,141772,1749,36414,642,0,N,N,N,CP_Drtn,TT_Task,DT_FixedDUR2,TK_NotStart,BL3-MEP-PL-3F-2040,Drainage Pipes Gravity Test,,464,120,48,0,48,48,48,826.240719,0,826.240719,,,,2015-08-18 08:00,2015-08-23 16:00,,2015-06-21 08:00,2015-06-26 16:00,2015-06-21 08:00,2015-06-26 16:00,2015-06-21 08:00,2015-06-26 16:00,2015-08-18 08:00,2015-08-23 16:00,,PT_Normal,,,,,WAf+s2OuBk6YwihiE8bIAw,aHioXifbSAyzTtVewK1dOA,,,N,0,0,,,2014-04-05 12:28,2014-04-05 13:21,admin,admin,
2030,141773,1749,36092,642,0,N,N,N,CP_Drtn,TT_Task,DT_FixedDUR2,TK_NotStart,BL3-MEP-EL-3F-2060,SMDB's  Installation,,1392,104,48,0,45,45,48,4202.598932,0,4202.598932,,,,2015-12-17 08:00,2015-12-22 16:00,,2015-06-26 08:00,2015-07-01 16:00,2015-06-26 08:00,2015-07-01 16:00,2015-06-26 08:00,2015-07-01 16:00,2015-12-17 08:00,2015-12-22 16:00,,PT_Normal,,,,,Fg/6AQNCO0SAec0PeD8Uew,frKSXKf1TVK+SC+9MuBfSQ,,,N,0,0,,,2014-04-05 12:28,2014-04-05 13:21,admin,admin,
2031,141774,1749,36092,642,0,N,N,N,CP_Drtn,TT_Task,DT_FixedDUR2,TK_NotStart,BL3-MEP-EL-3F-2000,Lighting  Wiring,,552,112,96,0,241.713,241.713,96,3578.08423,0,3578.08423,,,,2015-08-12 08:00,2015-08-23 16:00,,2015-06-04 08:00,2015-06-15 16:00,2015-06-04 08:00,2015-06-15 16:00,2015-06-04 08:00,2015-06-15 16:00,2015-08-12 08:00,2015-08-23 16:00,,PT_Normal,,,,,nW65CHgiEkK2JZMqz+7Dsw,3GJdLECDStu4byI8unHsKA,,,N,0,0,,,2014-04-05 12:28,2014-04-05 13:21,admin,admin,
2032,141775,1749,36092,642,0,N,N,N,CP_Drtn,TT_Task,DT_FixedDUR2,TK_NotStart,BL3-MEP-EL-3F-2010,Power Points Wiring,,552,56,96,0,192,192,96,2906.213289,0,2906.213289,,,,2015-08-12 08:00,2015-08-23 16:00,,2015-06-04 08:00,2015-06-15 16:00,2015-06-04 08:00,2015-06-15 16:00,2015-06-04 08:00,2015-06-15 16:00,2015-08-12 08:00,2015-08-23 16:00,,PT_Normal,,,,,vZC6pwXhHU2V3s3Fq9TaMw,8g0XZUKsRPGAqXPV75TdBw,,,N,0,0,,,2014-04-05 12:28,2014-04-05 13:21,admin,admin,
2033,141776,1749,36092,642,0,N,N,N,CP_Drtn,TT_Task,DT_FixedDUR2,TK_NotStart,BL3-MEP-EL-3F-2020,Cable Tray and Trunking Installation,,552,40,112,0,336,336,112,9078.448617,0,9078.448617,,,,2015-08-10 08:00,2015-08-23 16:00,,2015-06-02 08:00,2015-06-15 16:00,2015-06-02 08:00,2015-06-15 16:00,2015-06-02 08:00,2015-06-15 16:00,2015-08-10 08:00,2015-08-23 16:00,,PT_Normal,,,,,m4JSkddvVEOqSFCm6E6zKA,kGE58Ic6SLy1r95w7O6viA,,,N,0,0,,,2014-04-05 12:28,2014-04-05 13:21,admin,admin,
2034,141777,1749,36092,642,0,N,N,N,CP_Drtn,TT_Task,DT_FixedDUR2,TK_NotStart,BL3-MEP-EL-3F-2030,Emergency Light Wiring,,552,88,64,0,128,128,64,1210.028798,0,1210.028798,,,,2015-08-16 08:00,2015-08-23 16:00,,2015-06-08 08:00,2015-06-15 16:00,2015-06-08 08:00,2015-06-15 16:00,2015-06-08 08:00,2015-06-15 16:00,2015-08-16 08:00,2015-08-23 16:00,,PT_Normal,,,,,K1TwNjN8y0qV0VwAo0t1kQ,YfiRQke1QDuN6GWq+tPwWw,,,N,0,0,,,2014-04-05 12:28,2014-04-05 13:21,admin,admin,
2035,141778,1749,36092,642,0,N,N,N,CP_Drtn,TT_Task,DT_FixedDUR2,TK_NotStart,BL3-MEP-EL-3F-2040,Fire Alarm System Wiring,,552,56,96,0,192,192,96,7123.009694,0,7123.009694,,,,2015-08-12 08:00,2015-08-23 16:00,,2015-06-04 08:00,2015-06-15 16:00,2015-06-04 08:00,2015-06-15 16:00,2015-06-04 08:00,2015-06-15 16:00,2015-08-12 08:00,2015-08-23 16:00,,PT_Normal,,,,,BUaDYzyoc0CsxCN6rLjIyg,IA5Ijr1nQvqPELVwuA2yPw,,,N,0,0,,,2014-04-05 12:28,2014-04-05 13:21,admin,admin,
2036,141779,1749,36092,642,0,N,N,N,CP_Drtn,TT_Task,DT_FixedDUR2,TK_NotStart,BL3-MEP-EL-3F-2070,DB's Installation and Termination,4455,376,0,96,0,288,288,96,4982.925025,0,4982.925025,,,,2015-08-12 08:00,2015-08-23 16:00,,2015-06-26 08:00,2015-07-07 16:00,2015-06-26 08:00,2015-07-07 16:00,2015-06-26 08:00,2015-07-07 16:00,2015-08-12 08:00,2015-08-23 16:00,,PT_Normal,,,,,M3Yc34FL70mqZb5TpkxGZA,GEIPiIBdTPSLZ1iYdz7G/g,,,N,0,0,,,2014-04-05 12:28,2014-04-05 13:21,admin,admin,
2037,141780,1749,36092,642,0,N,N,N,CP_Drtn,TT_Task,DT_FixedDUR2,TK_NotStart,BL3-MEP-EL-3F-2050,Low Current  System Wiring,4455,1632,320,112,0,244,244,112,38231.783306,0,38231.783306,,,,2015-12-23 08:00,2016-01-05 16:00,,2015-06-02 08:00,2015-06-15 16:00,2015-06-02 08:00,2015-06-15 16:00,2015-06-02 08:00,2015-06-15 16:00,2015-12-23 08:00,2016-01-05 16:00,,PT_Normal,,,,,U1h/zemt/EaCe8rRGsh4HA,CQwbCKE2TfWqtvY7BcvptA,,,N,0,0,,,2014-04-05 12:28,2014-04-05 13:21,admin,admin,
2038,141781,1749,36257,642,0,N,N,N,CP_Drtn,TT_Task,DT_FixedDUR2,TK_NotStart,BL3-MEP-EL-3F-3000,Lights Fitting Fixing,,632,40,112,0,244,244,112,7336.659378,0,7336.659378,,,,2015-10-13 08:00,2015-10-26 16:00,,2015-07-26 08:00,2015-08-08 16:00,2015-07-26 08:00,2015-08-08 16:00,2015-07-26 08:00,2015-08-08 16:00,2015-10-13 08:00,2015-10-26 16:00,,PT_Normal,,,,,4JkD10wZbUSpYZztiy79Mg,4ZaoKNT5QcaXLQazzhP7Uw,,,N,0,0,,,2014-04-05 12:28,2014-04-05 13:21,admin,admin,
2039,141782,1749,36257,642,0,N,N,N,CP_Drtn,TT_Task,DT_FixedDUR2,TK_NotStart,BL3-MEP-EL-3F-3070,Sockets and Switches Fixing,,1064,88,64,0,128,128,64,1174.957134,0,1174.957134,,,,2015-12-06 08:00,2015-12-13 16:00,,2015-07-26 08:00,2015-08-02 16:00,2015-07-26 08:00,2015-08-02 16:00,2015-07-26 08:00,2015-08-02 16:00,2015-12-06 08:00,2015-12-13 16:00,,PT_Normal,,,,,m3XhfIQOK0WdMW4g7x+p6w,gf8NJOQ9RGOoB/if7twrmA,,,N,0,0,,,2014-04-05 12:28,2014-04-05 13:21,admin,admin,
2040,141783,1749,36257,642,0,N,N,N,CP_Drtn,TT_Task,DT_FixedDUR2,TK_NotStart,BL3-MEP-EL-3F-3010,Emergency Light Fixing,,1104,88,64,0,128,128,64,5722.024623,0,5722.024623,,,,2015-12-11 08:00,2015-12-18 16:00,,2015-07-26 08:00,2015-08-02 16:00,2015-07-26 08:00,2015-08-02 16:00,2015-07-26 08:00,2015-08-02 16:00,2015-12-11 08:00,2015-12-18 16:00,,PT_Normal,,,,,sJ0Vc/leZUiFerZIdY1OoA,+DOT3q+WRpuc0CcdJQLaLA,,,N,0,0,,,2014-04-05 12:28,2014-04-05 13:21,admin,admin,
2041,141784,1749,36257,642,0,N,N,N,CP_Drtn,TT_Task,DT_FixedDUR2,TK_NotStart,BL3-MEP-EL-3F-3020,Fire Alarm System Detector Installation,,776,56,96,0,192,192,96,4046.378277,0,4046.378277,,,,2015-10-31 08:00,2015-11-11 16:00,,2015-07-26 08:00,2015-08-06 16:00,2015-07-26 08:00,2015-08-06 16:00,2015-07-26 08:00,2015-08-06 16:00,2015-10-31 08:00,2015-11-11 16:00,,PT_Normal,,,,,KE2y7r0xgE2zG7jKRKQ06Q,ey6wnlL4QGOy1W5NlNozhw,,,N,0,0,,,2014-04-05 12:28,2014-04-05 13:21,admin,admin,
2042,141785,1749,36257,642,0,N,N,N,CP_Drtn,TT_Task,DT_FixedDUR2,TK_NotStart,BL3-MEP-EL-3F-3040,SMDB's  Termination and Final Connection,,1200,104,48,0,192,192,48,2791.825001,0,2791.825001,,,,2015-12-23 08:00,2015-12-28 16:00,,2015-07-26 08:00,2015-07-31 16:00,2015-07-26 08:00,2015-07-31 16:00,2015-07-26 08:00,2015-07-31 16:00,2015-12-23 08:00,2015-12-28 16:00,,PT_Normal,,,,,X0TksrsrskqxlhgCt9aefw,H/hDNVJHRUKTkVs2eJUVkQ,,,N,0,0,,,2014-04-05 12:28,2014-04-05 13:21,admin,admin,
2043,141786,1749,36092,642,0,N,N,N,CP_Drtn,TT_Task,DT_FixedDUR2,TK_NotStart,BL3-MEP-EL-3F-3060,Power Cable Puling,,728,32,112,0,168,168,112,6375.759893,0,6375.759893,,,,2015-10-07 08:00,2015-10-20 16:00,,2015-07-08 08:00,2015-07-21 16:00,2015-07-08 08:00,2015-07-21 16:00,2015-07-08 08:00,2015-07-21 16:00,2015-10-07 08:00,2015-10-20 16:00,,PT_Normal,,,,,vb7PxuIukkO0P5Ev3aiEiQ,sSIQkxChTTC3nCHBswmIQA,,,N,0,0,,,2014-04-05 12:28,2014-04-05 13:21,admin,admin,
2044,141787,1749,36257,642,0,N,N,N,CP_Drtn,TT_Task,DT_FixedDUR2,TK_NotStart,BL3-MEP-EL-3F-3030,Despature for Low Current  System Installation,4455,1312,0,112,0,336,336,112,72752.164276,0,72752.164276,,,,2016-01-06 08:00,2016-01-19 16:00,,2015-07-26 08:00,2015-08-08 16:00,2015-07-26 08:00,2015-08-08 16:00,2015-07-26 08:00,2015-08-08 16:00,2016-01-06 08:00,2016-01-19 16:00,,PT_Normal,,,,,9Ij5rgrvE02yBukP8CC/lA,TtCpdlV7ShylIgCm8/oh3A,,,N,0,0,,,2014-04-05 12:28,2014-04-05 13:21,admin,admin,
2045,141788,1749,36257,642,0,N,N,N,CP_Drtn,TT_Task,DT_FixedDUR2,TK_NotStart,BL3-MEP-EL-3F-3050,Low Current  System Outlet installation and Connection,4455,1312,1072,80,0,80,80,80,3870.787498,0,3870.787498,,,,2016-01-20 08:00,2016-01-29 16:00,,2015-08-09 08:00,2015-08-18 16:00,2015-08-09 08:00,2015-08-18 16:00,2015-08-09 08:00,2015-08-18 16:00,2016-01-20 08:00,2016-01-29 16:00,,PT_Normal,,,,,3lEE7kx/dEWWkLZHKJYe0w,wUQA+X17Qr6lW6U/r76mcw,,,N,0,0,,,2014-04-05 12:28,2014-04-05 13:21,admin,admin,
2046,141789,1749,36346,642,0,N,N,N,CP_Drtn,TT_Task,DT_FixedDUR2,TK_NotStart,BL3-MEP-AC-4F-2000,Duct Installation and Insulation,4454,112,0,168,0,263,263,168,4350.939473,0,4350.939473,,,,2015-07-05 08:00,2015-07-25 16:00,,2015-06-21 08:00,2015-07-11 16:00,2015-06-21 08:00,2015-07-11 16:00,2015-06-21 08:00,2015-07-11 16:00,2015-07-05 08:00,2015-07-25 16:00,,PT_Normal,,,,,pO3gVkqduUqQLp0bt6GgMA,aLvMWfl2SGS1XknWPCs9fg,,,N,0,0,,,2014-04-05 12:28,2014-04-05 13:21,admin,admin,
2047,141790,1749,36346,642,0,N,N,N,CP_Drtn,TT_Task,DT_FixedDUR2,TK_NotStart,BL3-MEP-AC-4F-2030,Duct Accessories Installation,4457,352,56,112,0,448,448,112,666.965527,0,666.965527,,,,2015-08-25 08:00,2015-09-07 16:00,,2015-07-12 08:00,2015-07-25 16:00,2015-07-12 08:00,2015-07-25 16:00,2015-07-12 08:00,2015-07-25 16:00,2015-08-25 08:00,2015-09-07 16:00,,PT_Normal,,,,,jXLiPEe8CUa0GsZEmodO/w,Pc/AGTaSTGGBwy0hs5xuqw,,,N,0,0,,,2014-04-05 12:28,2014-04-05 13:21,admin,admin,
2048,141791,1749,36346,642,0,N,N,N,CP_Drtn,TT_Task,DT_FixedDUR2,TK_NotStart,BL3-MEP-AC-4F-2010,FCU's Installation,4457,448,104,64,0,192,192,64,6000.055155,0,6000.055155,,,,2015-08-22 08:00,2015-08-29 16:00,,2015-06-27 08:00,2015-07-04 16:00,2015-06-27 08:00,2015-07-04 16:00,2015-06-27 08:00,2015-07-04 16:00,2015-08-22 08:00,2015-08-29 16:00,,PT_Normal,,,,,aleO/cr/20mQ/k+jLpaIxw,J+sbpGi7S/iMIeYUh7atzw,,,N,0,0,,,2014-04-05 12:28,2014-04-05 13:21,admin,admin,
2049,141792,1749,36346,642,0,N,N,N,CP_Drtn,TT_Task,DT_FixedDUR2,TK_NotStart,BL3-MEP-AC-4F-2020,Chilled Water Pipes and Fittings Installation,4457,104,0,168,0,840,840,168,5251.194852,0,5251.194852,,,,2015-07-04 08:00,2015-07-24 16:00,,2015-06-21 08:00,2015-07-11 16:00,2015-06-21 08:00,2015-07-11 16:00,2015-06-21 08:00,2015-07-11 16:00,2015-07-04 08:00,2015-07-24 16:00,,PT_Normal,,,,,5BDnzslYEUqWapalTg1R0w,yB8Eg3mRSoSAlFT+snLksA,,,N,0,0,,,2014-04-05 12:28,2014-04-05 13:21,admin,admin,
2050,141793,1749,36346,642,0,N,N,N,CP_Drtn,TT_Task,DT_FixedDUR2,TK_NotStart,BL3-MEP-AC-4F-2040,Chilled Water Pipes Pressure Test,4457,344,0,48,0,96,96,48,587.116683,0,587.116683,,,,2015-08-24 08:00,2015-08-29 16:00,,2015-07-12 08:00,2015-07-17 16:00,2015-07-12 08:00,2015-07-17 16:00,2015-07-12 08:00,2015-07-17 16:00,2015-08-24 08:00,2015-08-29 16:00,,PT_Normal,,,,,XM0a+rXfG0Ks3LaareabCg,I30S9LPQSjWkmPXUD+H6Ag,,,N,0,0,,,2014-04-05 12:28,2014-04-05 13:21,admin,admin,
2051,141794,1749,36346,642,0,N,N,N,CP_Drtn,TT_Task,DT_FixedDUR2,TK_NotStart,BL3-MEP-AC-4F-2050,Chilled Water Pipes Insulation,4457,1008,72,96,0,384,384,96,1670.208495,0,1670.208495,,,,2015-11-21 08:00,2015-12-02 16:00,,2015-07-18 08:00,2015-07-29 16:00,2015-07-18 08:00,2015-07-29 16:00,2015-07-18 08:00,2015-07-29 16:00,2015-11-21 08:00,2015-12-02 16:00,,PT_Normal,,,,,/91qYCkLBECD/6dU8IeRCQ,vnqC8DhaS/aDmXAYBDMYHA,,,N,0,0,,,2014-04-05 12:28,2014-04-05 13:21,admin,admin,
2052,141795,1749,36346,642,0,N,N,N,CP_Drtn,TT_Task,DT_FixedDUR2,TK_NotStart,BL3-MEP-AC-4F-2060,Valve Package Installation,4457,344,0,48,0,96,96,48,2386.490429,0,2386.490429,,,,2015-08-30 08:00,2015-09-04 16:00,,2015-07-18 08:00,2015-07-23 16:00,2015-07-18 08:00,2015-07-23 16:00,2015-07-18 08:00,2015-07-23 16:00,2015-08-30 08:00,2015-09-04 16:00,,PT_Normal,,,,,/U9vJu4570GpFvu/jM7biA,AHQL7DRsQl+i1G9EOSXGsA,,,N,0,0,,,2014-04-05 12:28,2014-04-05 13:21,admin,admin,
2053,141796,1749,36346,642,0,N,N,N,CP_Drtn,TT_Task,DT_FixedDUR2,TK_NotStart,BL3-MEP-AC-4F-2070,FCU's Drain Pipes Installation,4457,344,96,24,0,48,48,24,519.927167,0,519.927167,,,,2015-09-05 08:00,2015-09-07 16:00,,2015-07-24 08:00,2015-07-26 16:00,2015-07-24 08:00,2015-07-26 16:00,2015-07-24 08:00,2015-07-26 16:00,2015-09-05 08:00,2015-09-07 16:00,,PT_Normal,,,,,aaxiCdXFHEOOZ5ktNm4MeQ,vlCNBQ1nQ4+hskvs454Abg,,,N,0,0,,,2014-04-05 12:28,2014-04-05 13:21,admin,admin,
2054,141797,1749,36521,642,0,N,N,N,CP_Drtn,TT_Task,DT_FixedDUR2,TK_NotStart,BL3-MEP-PL-4F-2030,Floor Drain Installation,,1064,152,48,0,6,6,48,554.143324,0,554.143324,,,,2015-12-25 08:00,2015-12-30 16:00,,2015-08-14 08:00,2015-08-19 16:00,2015-08-14 08:00,2015-08-19 16:00,2015-08-14 08:00,2015-08-19 16:00,2015-12-25 08:00,2015-12-30 16:00,,PT_Normal,,,,,5dFwocdrwUW8aocOaOdqfQ,HhHd2gIXSrGiOCFuBdEPZQ,,,N,0,0,,,2014-04-05 12:28,2014-04-05 13:21,admin,admin,
2055,141798,1749,36521,642,0,N,N,N,CP_Drtn,TT_Task,DT_FixedDUR2,TK_NotStart,BL3-MEP-PL-4F-2000,High Level Water Supply Pipes and Fittings Installation,,176,0,168,0,150.02,150.02,168,1329.597866,0,1329.597866,,,,2015-07-13 08:00,2015-08-02 16:00,,2015-06-21 08:00,2015-07-11 16:00,2015-06-21 08:00,2015-07-11 16:00,2015-06-21 08:00,2015-07-11 16:00,2015-07-13 08:00,2015-08-02 16:00,,PT_Normal,,,,,eBRgVTT1aE+HVYUInZz9/w,jLevSxxdTK2TWi6DzneMWA,,,N,0,0,,,2014-04-05 12:28,2014-04-05 13:21,admin,admin,
2056,141799,1749,36521,642,0,N,N,N,CP_Drtn,TT_Task,DT_FixedDUR2,TK_NotStart,BL3-MEP-PL-4F-2010,High Level Drainage Pipes Installation,,176,0,168,0,244.38,244.38,168,6583.525267,0,6583.525267,,,,2015-07-13 08:00,2015-08-02 16:00,,2015-06-21 08:00,2015-07-11 16:00,2015-06-21 08:00,2015-07-11 16:00,2015-06-21 08:00,2015-07-11 16:00,2015-07-13 08:00,2015-08-02 16:00,,PT_Normal,,,,,CYuUFNJwLkSR+8KwrHOrZg,tdAF8ff1TnyICnuwvjyP4g,,,N,0,0,,,2014-04-05 12:28,2014-04-05 13:21,admin,admin,
2057,141800,1749,36521,642,0,N,N,N,CP_Drtn,TT_Task,DT_FixedDUR2,TK_NotStart,BL3-MEP-PL-4F-2020,Water Supply Pipes Pressure Test,4456,416,120,48,0,48,48,48,151.744312,0,151.744312,,,,2015-09-02 08:00,2015-09-07 16:00,,2015-07-12 08:00,2015-07-17 16:00,2015-07-12 08:00,2015-07-17 16:00,2015-07-12 08:00,2015-07-17 16:00,2015-09-02 08:00,2015-09-07 16:00,,PT_Normal,,,,,u3gFcOAPCkeIMAsJ10NI3g,k7rVWTCuQSKabjSdXah8Ww,,,N,0,0,,,2014-04-05 12:28,2014-04-05 13:21,admin,admin,
2058,141801,1749,36521,642,0,N,N,N,CP_Drtn,TT_Task,DT_FixedDUR2,TK_NotStart,BL3-MEP-PL-4F-2040,Drainage Pipes Gravity Test,,416,120,48,0,48,48,48,826.240719,0,826.240719,,,,2015-09-02 08:00,2015-09-07 16:00,,2015-07-12 08:00,2015-07-17 16:00,2015-07-12 08:00,2015-07-17 16:00,2015-07-12 08:00,2015-07-17 16:00,2015-09-02 08:00,2015-09-07 16:00,,PT_Normal,,,,,+qZ/56fQiU+DxUbnZ12tDA,f/aIPwNjTWuxmqcugD2Kgw,,,N,0,0,,,2014-04-05 12:28,2014-04-05 13:21,admin,admin,
2059,141802,1749,36205,642,0,N,N,N,CP_Drtn,TT_Task,DT_FixedDUR2,TK_NotStart,BL3-MEP-EL-4F-1000,PVC Back Boxes and Conduits  Fixing in Wall,,56,0,176,0,384,384,176,3329.67233,0,3329.67233,,,,2015-06-07 08:00,2015-06-28 16:00,,2015-05-31 08:00,2015-06-21 16:00,2015-05-31 08:00,2015-06-21 16:00,2015-05-31 08:00,2015-06-21 16:00,2015-06-07 08:00,2015-06-28 16:00,,PT_Normal,,,,,zcxeeH4ya0ahvp7HcBcFlA,Kq7QiDpSS6KqS50wMdbgYg,,,N,0,0,,,2014-04-05 12:28,2014-04-05 13:21,admin,admin,
2060,141803,1749,36205,642,0,N,N,N,CP_Drtn,TT_Task,DT_FixedDUR2,TK_NotStart,BL3-MEP-EL-4F-1010,DB's Inclosure Fixing,4455,232,72,48,0,96,96,48,2136.399392,0,2136.399392,,,,2015-07-11 08:00,2015-07-16 16:00,,2015-06-12 08:00,2015-06-17 16:00,2015-06-12 08:00,2015-06-17 16:00,2015-06-12 08:00,2015-06-17 16:00,2015-07-11 08:00,2015-07-16 16:00,,PT_Normal,,,,,zBOvvWHqQE+zStCyCdTnFg,8ozW0U4vSTKfc8FOORxMVg,,,N,0,0,,,2014-04-05 12:28,2014-04-05 13:21,admin,admin,
2061,141804,1749,36206,642,0,N,N,N,CP_Drtn,TT_Task,DT_FixedDUR2,TK_NotStart,BL3-MEP-EL-4F-2060,SMDB's  Installation,,1288,152,48,0,45,45,48,4202.598932,0,4202.598932,,,,2015-12-23 08:00,2015-12-28 16:00,,2015-07-15 08:00,2015-07-20 16:00,2015-07-15 08:00,2015-07-20 16:00,2015-07-15 08:00,2015-07-20 16:00,2015-12-23 08:00,2015-12-28 16:00,,PT_Normal,,,,,ROg7BG1USU+Xeu0Rqld3Jg,gPihkTWrQg+Z+j0CAEiD6Q,,,N,0,0,,,2014-04-05 12:28,2014-04-05 13:21,admin,admin,
2062,141805,1749,36206,642,0,N,N,N,CP_Drtn,TT_Task,DT_FixedDUR2,TK_NotStart,BL3-MEP-EL-4F-2000,Lighting  Wiring,,464,40,96,0,241.713,241.713,96,3578.08423,0,3578.08423,,,,2015-08-27 08:00,2015-09-07 16:00,,2015-06-30 08:00,2015-07-11 16:00,2015-06-30 08:00,2015-07-11 16:00,2015-06-30 08:00,2015-07-11 16:00,2015-08-27 08:00,2015-09-07 16:00,,PT_Normal,,,,,abYjUNBPSUSMoYLQKJR/xg,hL2HOR+KRo2FjgMlThtebw,,,N,0,0,,,2014-04-05 12:28,2014-04-05 13:21,admin,admin,
2063,141806,1749,36206,642,0,N,N,N,CP_Drtn,TT_Task,DT_FixedDUR2,TK_NotStart,BL3-MEP-EL-4F-2010,Power Points Wiring,,520,96,96,0,192,192,96,2906.213289,0,2906.213289,,,,2015-08-27 08:00,2015-09-07 16:00,,2015-06-23 08:00,2015-07-04 16:00,2015-06-23 08:00,2015-07-04 16:00,2015-06-23 08:00,2015-07-04 16:00,2015-08-27 08:00,2015-09-07 16:00,,PT_Normal,,,,,hqN1B285GkG9SWNAX28sGA,ZYYOXLHUT4urwhbpP6tztA,,,N,0,0,,,2014-04-05 12:28,2014-04-05 13:21,admin,admin,
2064,141807,1749,36206,642,0,N,N,N,CP_Drtn,TT_Task,DT_FixedDUR2,TK_NotStart,BL3-MEP-EL-4F-2020,Cable Tray and Trunking Installation,,520,80,112,0,336,336,112,9078.448617,0,9078.448617,,,,2015-08-25 08:00,2015-09-07 16:00,,2015-06-21 08:00,2015-07-04 16:00,2015-06-21 08:00,2015-07-04 16:00,2015-06-21 08:00,2015-07-04 16:00,2015-08-25 08:00,2015-09-07 16:00,,PT_Normal,,,,,aa3cH9d4hUCaglRJxnKaNA,QokYDc0aSJyxF/sxT8t1og,,,N,0,0,,,2014-04-05 12:28,2014-04-05 13:21,admin,admin,
2065,141808,1749,36206,642,0,N,N,N,CP_Drtn,TT_Task,DT_FixedDUR2,TK_NotStart,BL3-MEP-EL-4F-2030,Emergency Light Wiring,,520,128,64,0,128,128,64,1210.028798,0,1210.028798,,,,2015-08-31 08:00,2015-09-07 16:00,,2015-06-27 08:00,2015-07-04 16:00,2015-06-27 08:00,2015-07-04 16:00,2015-06-27 08:00,2015-07-04 16:00,2015-08-31 08:00,2015-09-07 16:00,,PT_Normal,,,,,Zdpg0NW640OtMiFOroEAbA,ZsEGIkDrScy6YeAZ+iZrQg,,,N,0,0,,,2014-04-05 12:28,2014-04-05 13:21,admin,admin,
2066,141809,1749,36206,642,0,N,N,N,CP_Drtn,TT_Task,DT_FixedDUR2,TK_NotStart,BL3-MEP-EL-4F-2040,Fire Alarm System Wiring,,520,96,96,0,192,192,96,7123.009694,0,7123.009694,,,,2015-08-27 08:00,2015-09-07 16:00,,2015-06-23 08:00,2015-07-04 16:00,2015-06-23 08:00,2015-07-04 16:00,2015-06-23 08:00,2015-07-04 16:00,2015-08-27 08:00,2015-09-07 16:00,,PT_Normal,,,,,IqvEZWC1A0ev7aHG8S3QDQ,F98QHcTDSjOrQzqfuziwGw,,,N,0,0,,,2014-04-05 12:28,2014-04-05 13:21,admin,admin,
2067,141810,1749,36206,642,0,N,N,N,CP_Drtn,TT_Task,DT_FixedDUR2,TK_NotStart,BL3-MEP-EL-4F-2070,DB's Installation and Termination,4455,344,0,96,0,288,288,96,4982.925025,0,4982.925025,,,,2015-08-27 08:00,2015-09-07 16:00,,2015-07-15 08:00,2015-07-26 16:00,2015-07-15 08:00,2015-07-26 16:00,2015-07-15 08:00,2015-07-26 16:00,2015-08-27 08:00,2015-09-07 16:00,,PT_Normal,,,,,dL3I6hRk0EiQJ1LmHUg3Mw,uCCRcK64TUWz6IgfD6dZAQ,,,N,0,0,,,2014-04-05 12:28,2014-04-05 13:21,admin,admin,
2068,141811,1749,36206,642,0,N,N,N,CP_Drtn,TT_Task,DT_FixedDUR2,TK_NotStart,BL3-MEP-EL-4F-2050,Low Current  System Wiring,4455,1488,312,112,0,244,244,112,38231.783306,0,38231.783306,,,,2015-12-25 08:00,2016-01-07 16:00,,2015-06-22 08:00,2015-07-05 16:00,2015-06-22 08:00,2015-07-05 16:00,2015-06-22 08:00,2015-07-05 16:00,2015-12-25 08:00,2016-01-07 16:00,,PT_Normal,,,,,xqGUS3CamkOtlLbqAJYiqQ,zzmwHlGzSNG/8TKaPOauFQ,,,N,0,0,,,2014-04-05 12:28,2014-04-05 13:21,admin,admin,
2069,141812,1749,36275,642,0,N,N,N,CP_Drtn,TT_Task,DT_FixedDUR2,TK_NotStart,BL3-MEP-EL-4F-3000,Lights Fitting Fixing,,592,88,112,0,244,244,112,7336.659378,0,7336.659378,,,,2015-10-27 08:00,2015-11-09 16:00,,2015-08-14 08:00,2015-08-27 16:00,2015-08-14 08:00,2015-08-27 16:00,2015-08-14 08:00,2015-08-27 16:00,2015-10-27 08:00,2015-11-09 16:00,,PT_Normal,,,,,10c3/pUIAEWDXDgUuIBFww,ezreJaGcRgWH/CkMzG1Elw,,,N,0,0,,,2014-04-05 12:28,2014-04-05 13:21,admin,admin,
2070,141813,1749,36275,642,0,N,N,N,CP_Drtn,TT_Task,DT_FixedDUR2,TK_NotStart,BL3-MEP-EL-4F-3060,Sockets and Switches Fixing,,976,136,64,0,128,128,64,1174.957134,0,1174.957134,,,,2015-12-14 08:00,2015-12-21 16:00,,2015-08-14 08:00,2015-08-21 16:00,2015-08-14 08:00,2015-08-21 16:00,2015-08-14 08:00,2015-08-21 16:00,2015-12-14 08:00,2015-12-21 16:00,,PT_Normal,,,,,hHLBF8ysq0S978uXwQDeMA,jQ3rjrnMQsC82s/sRIvMbQ,,,N,0,0,,,2014-04-05 12:28,2014-04-05 13:21,admin,admin,
2071,141814,1749,36275,642,0,N,N,N,CP_Drtn,TT_Task,DT_FixedDUR2,TK_NotStart,BL3-MEP-EL-4F-3010,Emergency Light Fixing,,1016,136,64,0,128,128,64,5722.024623,0,5722.024623,,,,2015-12-19 08:00,2015-12-26 16:00,,2015-08-14 08:00,2015-08-21 16:00,2015-08-14 08:00,2015-08-21 16:00,2015-08-14 08:00,2015-08-21 16:00,2015-12-19 08:00,2015-12-26 16:00,,PT_Normal,,,,,9OKI1WiWfkaF7QjPw0NeVQ,8dfOALeMS1uYR+fVdSw1SA,,,N,0,0,,,2014-04-05 12:28,2014-04-05 13:21,admin,admin,
2072,141815,1749,36275,642,0,N,N,N,CP_Drtn,TT_Task,DT_FixedDUR2,TK_NotStart,BL3-MEP-EL-4F-3020,Fire Alarm System Detector Installation,,720,104,96,0,192,192,96,4046.378277,0,4046.378277,,,,2015-11-12 08:00,2015-11-23 16:00,,2015-08-14 08:00,2015-08-25 16:00,2015-08-14 08:00,2015-08-25 16:00,2015-08-14 08:00,2015-08-25 16:00,2015-11-12 08:00,2015-11-23 16:00,,PT_Normal,,,,,O3eF/ObApEWJhp/1lIf+Qg,mf3PWxeyTxu6jDelaVQXzQ,,,N,0,0,,,2014-04-05 12:28,2014-04-05 13:21,admin,admin,
2073,141816,1749,36275,642,0,N,N,N,CP_Drtn,TT_Task,DT_FixedDUR2,TK_NotStart,BL3-MEP-EL-4F-3070,SMDB's  Termination and Final Connection,,1096,152,48,0,192,192,48,2791.825001,0,2791.825001,,,,2015-12-29 08:00,2016-01-03 16:00,,2015-08-14 08:00,2015-08-19 16:00,2015-08-14 08:00,2015-08-19 16:00,2015-08-14 08:00,2015-08-19 16:00,2015-12-29 08:00,2016-01-03 16:00,,PT_Normal,,,,,usRmWs19xESw3fNh6drUkA,fWDfBNrdRe+A3FJp5Ips/Q,,,N,0,0,,,2014-04-05 12:28,2014-04-05 13:21,admin,admin,
2074,141817,1749,36206,642,0,N,N,N,CP_Drtn,TT_Task,DT_FixedDUR2,TK_NotStart,BL3-MEP-EL-4F-3040,Power Cable Puling,,688,32,112,0,168,168,112,6375.759893,0,6375.759893,,,,2015-10-21 08:00,2015-11-03 16:00,,2015-07-27 08:00,2015-08-09 16:00,2015-07-27 08:00,2015-08-09 16:00,2015-07-27 08:00,2015-08-09 16:00,2015-10-21 08:00,2015-11-03 16:00,,PT_Normal,,,,,XgY3uDPaMkKUCdLSiJgdCA,tnnyT+HmQ7u6pgnDdIhRZQ,,,N,0,0,,,2014-04-05 12:28,2014-04-05 13:21,admin,admin,
2075,141818,1749,36275,642,0,N,N,N,CP_Drtn,TT_Task,DT_FixedDUR2,TK_NotStart,BL3-MEP-EL-4F-3030,Despature for Low Current  System Installation,4455,1176,0,112,0,336,336,112,72752.164276,0,72752.164276,,,,2016-01-08 08:00,2016-01-21 16:00,,2015-08-14 08:00,2015-08-27 16:00,2015-08-14 08:00,2015-08-27 16:00,2015-08-14 08:00,2015-08-27 16:00,2016-01-08 08:00,2016-01-21 16:00,,PT_Normal,,,,,IwqCQYyfu0+Ma6Rv/X51Rg,3L6Ty43hRAyUCS6BK1WNsw,,,N,0,0,,,2014-04-05 12:28,2014-04-05 13:21,admin,admin,
2076,141819,1749,36275,642,0,N,N,N,CP_Drtn,TT_Task,DT_FixedDUR2,TK_NotStart,BL3-MEP-EL-4F-3050,Low Current  System Outlet installation and Connection,4455,1176,968,80,0,80,80,80,3870.787498,0,3870.787498,,,,2016-01-22 08:00,2016-01-31 16:00,,2015-08-28 08:00,2015-09-06 16:00,2015-08-28 08:00,2015-09-06 16:00,2015-08-28 08:00,2015-09-06 16:00,2016-01-22 08:00,2016-01-31 16:00,,PT_Normal,,,,,1L7i/22vkUCg709bbGrbgw,uWEnv/d+RNWEOsz+U5gSFQ,,,N,0,0,,,2014-04-05 12:28,2014-04-05 13:21,admin,admin,
2077,141820,1749,36604,642,0,N,N,N,CP_Drtn,TT_Task,DT_FixedDUR2,TK_NotStart,BL3-MEP-AC-5F-2010,Duct Installation and Insulation,4454,112,0,168,0,263,263,168,4350.939473,0,4350.939473,,,,2015-07-26 08:00,2015-08-15 16:00,,2015-07-12 08:00,2015-08-01 16:00,2015-07-12 08:00,2015-08-01 16:00,2015-07-12 08:00,2015-08-01 16:00,2015-07-26 08:00,2015-08-15 16:00,,PT_Normal,,,,,IpE2ixeEpUyhFg5yMOiOrA,ofjfEfOnTIOoI6zPOyYmgw,,,N,0,0,,,2014-04-05 12:28,2014-04-05 13:21,admin,admin,
2078,141821,1749,36604,642,0,N,N,N,CP_Drtn,TT_Task,DT_FixedDUR2,TK_NotStart,BL3-MEP-AC-5F-2030,Duct Accessories Installation,4457,304,56,112,0,448,448,112,666.965527,0,666.965527,,,,2015-09-09 08:00,2015-09-22 16:00,,2015-08-02 08:00,2015-08-15 16:00,2015-08-02 08:00,2015-08-15 16:00,2015-08-02 08:00,2015-08-15 16:00,2015-09-09 08:00,2015-09-22 16:00,,PT_Normal,,,,,BKQzeOmQl0ei3+bFPLLmJQ,ePGjBQ8XTaGo10ItWJNM3w,,,N,0,0,,,2014-04-05 12:28,2014-04-05 13:21,admin,admin,
2079,141822,1749,36604,642,0,N,N,N,CP_Drtn,TT_Task,DT_FixedDUR2,TK_NotStart,BL3-MEP-AC-5F-2000,FCU's Installation,4457,376,80,64,0,192,192,64,6000.055155,0,6000.055155,,,,2015-09-06 08:00,2015-09-13 16:00,,2015-07-21 08:00,2015-07-28 16:00,2015-07-21 08:00,2015-07-28 16:00,2015-07-21 08:00,2015-07-28 16:00,2015-09-06 08:00,2015-09-13 16:00,,PT_Normal,,,,,mfELUNQ8c0GWrERyTEvdug,b13Cb5JZTv2D23s39aTCHQ,,,N,0,0,,,2014-04-05 12:28,2014-04-05 13:21,admin,admin,
2080,141823,1749,36604,642,0,N,N,N,CP_Drtn,TT_Task,DT_FixedDUR2,TK_NotStart,BL3-MEP-AC-5F-2020,Chilled Water Pipes and Fittings Installation,4457,104,0,168,0,840,840,168,5251.194852,0,5251.194852,,,,2015-07-25 08:00,2015-08-14 16:00,,2015-07-12 08:00,2015-08-01 16:00,2015-07-12 08:00,2015-08-01 16:00,2015-07-12 08:00,2015-08-01 16:00,2015-07-25 08:00,2015-08-14 16:00,,PT_Normal,,,,,KcuxG6zBFkOSbPE39/vBrQ,BcJeHuWPTbmGqzF3Y2LusA,,,N,0,0,,,2014-04-05 12:28,2014-04-05 13:21,admin,admin,
2081,141824,1749,36604,642,0,N,N,N,CP_Drtn,TT_Task,DT_FixedDUR2,TK_NotStart,BL3-MEP-AC-5F-2040,Chilled Water Pipes Pressure Test,4457,296,0,48,0,96,96,48,587.116683,0,587.116683,,,,2015-09-08 08:00,2015-09-13 16:00,,2015-08-02 08:00,2015-08-07 16:00,2015-08-02 08:00,2015-08-07 16:00,2015-08-02 08:00,2015-08-07 16:00,2015-09-08 08:00,2015-09-13 16:00,,PT_Normal,,,,,T7vwsLM1YUe17aAKq08YhQ,34SpDZylSRCPgspKf2qHwA,,,N,0,0,,,2014-04-05 12:28,2014-04-05 13:21,admin,admin,
2082,141825,1749,36604,642,0,N,N,N,CP_Drtn,TT_Task,DT_FixedDUR2,TK_NotStart,BL3-MEP-AC-5F-2050,Chilled Water Pipes Insulation,4457,936,72,96,0,384,384,96,1670.208495,0,1670.208495,,,,2015-12-03 08:00,2015-12-14 16:00,,2015-08-08 08:00,2015-08-19 16:00,2015-08-08 08:00,2015-08-19 16:00,2015-08-08 08:00,2015-08-19 16:00,2015-12-03 08:00,2015-12-14 16:00,,PT_Normal,,,,,AD02MJkdDk2t/XHQ0t6lbA,bwASiHzMSD2ZNk/H+rfDBQ,,,N,0,0,,,2014-04-05 12:28,2014-04-05 13:21,admin,admin,
2083,141826,1749,36604,642,0,N,N,N,CP_Drtn,TT_Task,DT_FixedDUR2,TK_NotStart,BL3-MEP-AC-5F-2060,Valve Package Installation,4457,296,0,48,0,96,96,48,2386.490429,0,2386.490429,,,,2015-09-14 08:00,2015-09-19 16:00,,2015-08-08 08:00,2015-08-13 16:00,2015-08-08 08:00,2015-08-13 16:00,2015-08-08 08:00,2015-08-13 16:00,2015-09-14 08:00,2015-09-19 16:00,,PT_Normal,,,,,lKt1vYBjAkC18Sw1Lija0Q,IczT/4B9QYyQBJZUJbKYeA,,,N,0,0,,,2014-04-05 12:28,2014-04-05 13:21,admin,admin,
2084,141827,1749,36604,642,0,N,N,N,CP_Drtn,TT_Task,DT_FixedDUR2,TK_NotStart,BL3-MEP-AC-5F-2070,FCU's Drain Pipes Installation,4457,296,128,24,0,48,48,24,519.927167,0,519.927167,,,,2015-09-20 08:00,2015-09-22 16:00,,2015-08-14 08:00,2015-08-16 16:00,2015-08-14 08:00,2015-08-16 16:00,2015-08-14 08:00,2015-08-16 16:00,2015-09-20 08:00,2015-09-22 16:00,,PT_Normal,,,,,xVLeCQfmZ0yvpm7fXJNH2w,JAsVn6V8R/2cE2cw1UpuXw,,,N,0,0,,,2014-04-05 12:28,2014-04-05 13:21,admin,admin,
2085,141828,1749,36507,642,0,N,N,N,CP_Drtn,TT_Task,DT_FixedDUR2,TK_NotStart,BL3-MEP-PL-5F-1000,Low Level Water Supply Pipes Installation,,192,16,96,0,42,42,96,725.216846,0,725.216846,,,,2015-07-22 08:00,2015-08-02 16:00,,2015-06-28 08:00,2015-07-09 16:00,2015-06-28 08:00,2015-07-09 16:00,2015-06-28 08:00,2015-07-09 16:00,2015-07-22 08:00,2015-08-02 16:00,,PT_Normal,,,,,MIaDrjW/PUuA/kL1IPw68A,wz6UT8OHRKqgkL5Uk5W4vw,,,N,0,0,,,2014-04-05 12:28,2014-04-05 13:21,admin,admin,
2086,141829,1749,36507,642,0,N,N,N,CP_Drtn,TT_Task,DT_FixedDUR2,TK_NotStart,BL3-MEP-PL-5F-1010,Low Level Drainage Pipes Installation,,192,16,96,0,12.67,12.67,96,2291.461713,0,2291.461713,,,,2015-07-22 08:00,2015-08-02 16:00,,2015-06-28 08:00,2015-07-09 16:00,2015-06-28 08:00,2015-07-09 16:00,2015-06-28 08:00,2015-07-09 16:00,2015-07-22 08:00,2015-08-02 16:00,,PT_Normal,,,,,egn/CGzxa0qogAwyxqBgNA,ym6NemYaQlOYfjlSFz5Y6Q,,,N,0,0,,,2014-04-05 12:28,2014-04-05 13:21,admin,admin,
2087,141830,1749,36507,642,0,N,N,N,CP_Drtn,TT_Task,DT_FixedDUR2,TK_NotStart,BL3-MEP-PL-5F-1020,Supports  installation for High level Pipes,,192,16,96,0,16.352,16.352,96,831.682549,0,831.682549,,,,2015-07-22 08:00,2015-08-02 16:00,,2015-06-28 08:00,2015-07-09 16:00,2015-06-28 08:00,2015-07-09 16:00,2015-06-28 08:00,2015-07-09 16:00,2015-07-22 08:00,2015-08-02 16:00,,PT_Normal,,,,,zKl6DRYZREm2ajp2xzHrbg,UsmzUYqPTh6j6KzuZRuG8Q,,,N,0,0,,,2014-04-05 12:28,2014-04-05 13:21,admin,admin,
2088,141831,1749,36399,642,0,N,N,N,CP_Drtn,TT_Task,DT_FixedDUR2,TK_NotStart,BL3-MEP-PL-5F-2030,Floor Drain Installation,,912,128,48,0,6,6,48,554.143324,0,554.143324,,,,2015-12-31 08:00,2016-01-05 16:00,,2015-09-08 08:00,2015-09-13 16:00,2015-09-08 08:00,2015-09-13 16:00,2015-09-08 08:00,2015-09-13 16:00,2015-12-31 08:00,2016-01-05 16:00,,PT_Normal,,,,,WyXZnKiaUkeTYz7a45w0/w,9YZTecyMT1miYlzwY1mbxQ,,,N,0,0,,,2014-04-05 12:28,2014-04-05 13:21,admin,admin,
2089,141832,1749,36399,642,0,N,N,N,CP_Drtn,TT_Task,DT_FixedDUR2,TK_NotStart,BL3-MEP-PL-5F-2000,High Level Water Supply Pipes and Fittings Installation,,176,0,168,0,150.02,150.02,168,1329.597866,0,1329.597866,,,,2015-08-03 08:00,2015-08-23 16:00,,2015-07-12 08:00,2015-08-01 16:00,2015-07-12 08:00,2015-08-01 16:00,2015-07-12 08:00,2015-08-01 16:00,2015-08-03 08:00,2015-08-23 16:00,,PT_Normal,,,,,y4vnelkPVkeiC1Gj1byTAA,mHLZUii8QRGeujRqGY8FUg,,,N,0,0,,,2014-04-05 12:28,2014-04-05 13:21,admin,admin,
2090,141833,1749,36399,642,0,N,N,N,CP_Drtn,TT_Task,DT_FixedDUR2,TK_NotStart,BL3-MEP-PL-5F-2010,High Level Drainage Pipes Installation,,176,0,168,0,244.38,244.38,168,6583.525267,0,6583.525267,,,,2015-08-03 08:00,2015-08-23 16:00,,2015-07-12 08:00,2015-08-01 16:00,2015-07-12 08:00,2015-08-01 16:00,2015-07-12 08:00,2015-08-01 16:00,2015-08-03 08:00,2015-08-23 16:00,,PT_Normal,,,,,Js0QvmNeWEWLGxVKOimfVA,AqMdES9URfm2VqwWqvyc4Q,,,N,0,0,,,2014-04-05 12:28,2014-04-05 13:21,admin,admin,
2091,141834,1749,36399,642,0,N,N,N,CP_Drtn,TT_Task,DT_FixedDUR2,TK_NotStart,BL3-MEP-PL-5F-2020,Water Supply Pipes Pressure Test,4456,368,120,48,0,48,48,48,151.744312,0,151.744312,,,,2015-09-17 08:00,2015-09-22 16:00,,2015-08-02 08:00,2015-08-07 16:00,2015-08-02 08:00,2015-08-07 16:00,2015-08-02 08:00,2015-08-07 16:00,2015-09-17 08:00,2015-09-22 16:00,,PT_Normal,,,,,RNH1WdSotkyvmGuMaNMCDw,dRi5OyaESsa7kI9KXRhdMg,,,N,0,0,,,2014-04-05 12:28,2014-04-05 13:21,admin,admin,
2092,141835,1749,36399,642,0,N,N,N,CP_Drtn,TT_Task,DT_FixedDUR2,TK_NotStart,BL3-MEP-PL-5F-2040,Drainage Pipes Gravity Test,,368,120,48,0,48,48,48,826.240719,0,826.240719,,,,2015-09-17 08:00,2015-09-22 16:00,,2015-08-02 08:00,2015-08-07 16:00,2015-08-02 08:00,2015-08-07 16:00,2015-08-02 08:00,2015-08-07 16:00,2015-09-17 08:00,2015-09-22 16:00,,PT_Normal,,,,,AYGXYmyk90CtcNS2ouLCtA,XNWq6YvfRq+h2zv3ROTe5w,,,N,0,0,,,2014-04-05 12:28,2014-04-05 13:21,admin,admin,
2093,141836,1749,36240,642,0,N,N,N,CP_Drtn,TT_Task,DT_FixedDUR2,TK_NotStart,BL3-MEP-EL-5F-2060,SMDB's  Installation,,1136,128,48,0,45,45,48,4202.598932,0,4202.598932,,,,2015-12-29 08:00,2016-01-03 16:00,,2015-08-09 08:00,2015-08-14 16:00,2015-08-09 08:00,2015-08-14 16:00,2015-08-09 08:00,2015-08-14 16:00,2015-12-29 08:00,2016-01-03 16:00,,PT_Normal,,,,,KxY13rU+akqZ1SsgxA/S7g,GjycUo/xRaibInsTTDNbQA,,,N,0,0,,,2014-04-05 12:28,2014-04-05 13:21,admin,admin,
2094,141837,1749,36240,642,0,N,N,N,CP_Drtn,TT_Task,DT_FixedDUR2,TK_NotStart,BL3-MEP-EL-5F-2000,Lighting  Wiring,,448,80,96,0,241.713,241.713,96,3578.08423,0,3578.08423,,,,2015-09-11 08:00,2015-09-22 16:00,,2015-07-17 08:00,2015-07-28 16:00,2015-07-17 08:00,2015-07-28 16:00,2015-07-17 08:00,2015-07-28 16:00,2015-09-11 08:00,2015-09-22 16:00,,PT_Normal,,,,,/0ENqkjJRk698pDxrrjrPA,KZBOl2QRTJW3YovWGCawhg,,,N,0,0,,,2014-04-05 12:28,2014-04-05 13:21,admin,admin,
2095,141838,1749,36240,642,0,N,N,N,CP_Drtn,TT_Task,DT_FixedDUR2,TK_NotStart,BL3-MEP-EL-5F-2010,Power Points Wiring,,448,80,96,0,192,192,96,2906.213289,0,2906.213289,,,,2015-09-11 08:00,2015-09-22 16:00,,2015-07-17 08:00,2015-07-28 16:00,2015-07-17 08:00,2015-07-28 16:00,2015-07-17 08:00,2015-07-28 16:00,2015-09-11 08:00,2015-09-22 16:00,,PT_Normal,,,,,WR+ZhgZxnUK/aERdUdntqQ,KGkzwuIkQf+HfkjNOtJWXg,,,N,0,0,,,2014-04-05 12:28,2014-04-05 13:21,admin,admin,
2096,141839,1749,36240,642,0,N,N,N,CP_Drtn,TT_Task,DT_FixedDUR2,TK_NotStart,BL3-MEP-EL-5F-2020,Cable Tray and Trunking Installation,,448,64,112,0,336,336,112,9078.448617,0,9078.448617,,,,2015-09-09 08:00,2015-09-22 16:00,,2015-07-15 08:00,2015-07-28 16:00,2015-07-15 08:00,2015-07-28 16:00,2015-07-15 08:00,2015-07-28 16:00,2015-09-09 08:00,2015-09-22 16:00,,PT_Normal,,,,,KM+04kmHlUu+HZMaTqmpzw,cr3Rhc8VTHCbjEtvMJKPoQ,,,N,0,0,,,2014-04-05 12:28,2014-04-05 13:21,admin,admin,
2097,141840,1749,36240,642,0,N,N,N,CP_Drtn,TT_Task,DT_FixedDUR2,TK_NotStart,BL3-MEP-EL-5F-2030,Emergency Light Wiring,,448,112,64,0,128,128,64,1210.028798,0,1210.028798,,,,2015-09-15 08:00,2015-09-22 16:00,,2015-07-21 08:00,2015-07-28 16:00,2015-07-21 08:00,2015-07-28 16:00,2015-07-21 08:00,2015-07-28 16:00,2015-09-15 08:00,2015-09-22 16:00,,PT_Normal,,,,,7UssuRNIaUC6vFtVcqNeRg,/BSlwQePQcaNi5OOPrIfZA,,,N,0,0,,,2014-04-05 12:28,2014-04-05 13:21,admin,admin,
2098,141841,1749,36240,642,0,N,N,N,CP_Drtn,TT_Task,DT_FixedDUR2,TK_NotStart,BL3-MEP-EL-5F-2040,Fire Alarm System Wiring,,448,80,96,0,192,192,96,7123.009694,0,7123.009694,,,,2015-09-11 08:00,2015-09-22 16:00,,2015-07-17 08:00,2015-07-28 16:00,2015-07-17 08:00,2015-07-28 16:00,2015-07-17 08:00,2015-07-28 16:00,2015-09-11 08:00,2015-09-22 16:00,,PT_Normal,,,,,r3Lq7K3gEEWgXHcVmVVCfQ,mdXD6vL+RFKAY0aZpp4E1g,,,N,0,0,,,2014-04-05 12:28,2014-04-05 13:21,admin,admin,
2099,141842,1749,36240,642,0,N,N,N,CP_Drtn,TT_Task,DT_FixedDUR2,TK_NotStart,BL3-MEP-EL-5F-2070,DB's Installation and Termination,4455,264,0,96,0,288,288,96,4982.925025,0,4982.925025,,,,2015-09-11 08:00,2015-09-22 16:00,,2015-08-09 08:00,2015-08-20 16:00,2015-08-09 08:00,2015-08-20 16:00,2015-08-09 08:00,2015-08-20 16:00,2015-09-11 08:00,2015-09-22 16:00,,PT_Normal,,,,,jV2G84wLiE+mXo0P2fxm9g,uNjosHULSmqGgVxB0Vlerw,,,N,0,0,,,2014-04-05 12:28,2014-04-05 13:21,admin,admin,
2100,141843,1749,36240,642,0,N,N,N,CP_Drtn,TT_Task,DT_FixedDUR2,TK_NotStart,BL3-MEP-EL-5F-2050,Low Current  System Wiring,4455,1320,328,112,0,244,244,112,38231.783306,0,38231.783306,,,,2015-12-27 08:00,2016-01-09 16:00,,2015-07-15 08:00,2015-07-28 16:00,2015-07-15 08:00,2015-07-28 16:00,2015-07-15 08:00,2015-07-28 16:00,2015-12-27 08:00,2016-01-09 16:00,,PT_Normal,,,,,NN8PZ/esA0eklabDXFbdhw,Vw/82xnpQ3KiWZbntIMY9Q,,,N,0,0,,,2014-04-05 12:28,2014-04-05 13:21,admin,admin,
2101,141844,1749,36223,642,0,N,N,N,CP_Drtn,TT_Task,DT_FixedDUR2,TK_NotStart,BL3-MEP-EL-5F-3000,Lights Fitting Fixing,,504,64,112,0,244,244,112,7336.659378,0,7336.659378,,,,2015-11-10 08:00,2015-11-23 16:00,,2015-09-08 08:00,2015-09-21 16:00,2015-09-08 08:00,2015-09-21 16:00,2015-09-08 08:00,2015-09-21 16:00,2015-11-10 08:00,2015-11-23 16:00,,PT_Normal,,,,,kUPNuv1DRUGM+hhhAadO/A,8v0eldP/SJiOtitvgLJZ2A,,,N,0,0,,,2014-04-05 12:28,2014-04-05 13:21,admin,admin,
2102,141845,1749,36223,642,0,N,N,N,CP_Drtn,TT_Task,DT_FixedDUR2,TK_NotStart,BL3-MEP-EL-5F-3070,Sockets and Switches Fixing,,840,112,64,0,128,128,64,1174.957134,0,1174.957134,,,,2015-12-22 08:00,2015-12-29 16:00,,2015-09-08 08:00,2015-09-15 16:00,2015-09-08 08:00,2015-09-15 16:00,2015-09-08 08:00,2015-09-15 16:00,2015-12-22 08:00,2015-12-29 16:00,,PT_Normal,,,,,vY+XoUCjGEqVcRgSTvB0hg,Cnkp+f3BR7GTtIxeHQLPCA,,,N,0,0,,,2014-04-05 12:28,2014-04-05 13:21,admin,admin,
2103,141846,1749,36223,642,0,N,N,N,CP_Drtn,TT_Task,DT_FixedDUR2,TK_NotStart,BL3-MEP-EL-5F-3010,Emergency Light Fixing,,880,112,64,0,128,128,64,5722.024623,0,5722.024623,,,,2015-12-27 08:00,2016-01-03 16:00,,2015-09-08 08:00,2015-09-15 16:00,2015-09-08 08:00,2015-09-15 16:00,2015-09-08 08:00,2015-09-15 16:00,2015-12-27 08:00,2016-01-03 16:00,,PT_Normal,,,,,8xulCAoU5EewtyrjHu003g,WaDGyxXzQ/CjQpFW6/hung,,,N,0,0,,,2014-04-05 12:28,2014-04-05 13:21,admin,admin,
2104,141847,1749,36223,642,0,N,N,N,CP_Drtn,TT_Task,DT_FixedDUR2,TK_NotStart,BL3-MEP-EL-5F-3020,Fire Alarm System Detector Installation,,616,80,96,0,192,192,96,4046.378277,0,4046.378277,,,,2015-11-24 08:00,2015-12-05 16:00,,2015-09-08 08:00,2015-09-19 16:00,2015-09-08 08:00,2015-09-19 16:00,2015-09-08 08:00,2015-09-19 16:00,2015-11-24 08:00,2015-12-05 16:00,,PT_Normal,,,,,EeO/1RDcAUmJNHNaVesldw,pwyvngK/TS+/D6Wkfoneuw,,,N,0,0,,,2014-04-05 12:28,2014-04-05 13:21,admin,admin,
2105,141848,1749,36223,642,0,N,N,N,CP_Drtn,TT_Task,DT_FixedDUR2,TK_NotStart,BL3-MEP-EL-5F-3060,SMDB's  Termination and Final Connection,,944,128,48,0,192,192,48,2791.825001,0,2791.825001,,,,2016-01-04 08:00,2016-01-09 16:00,,2015-09-08 08:00,2015-09-13 16:00,2015-09-08 08:00,2015-09-13 16:00,2015-09-08 08:00,2015-09-13 16:00,2016-01-04 08:00,2016-01-09 16:00,,PT_Normal,,,,,KY+wTC76GkiOtK/QeLERtQ,BmPlEwr+TomcANZjQq4knA,,,N,0,0,,,2014-04-05 12:28,2014-04-05 13:21,admin,admin,
2106,141849,1749,36240,642,0,N,N,N,CP_Drtn,TT_Task,DT_FixedDUR2,TK_NotStart,BL3-MEP-EL-5F-3040,Power Cable Puling,,600,32,112,0,168,168,112,6375.759893,0,6375.759893,,,,2015-11-04 08:00,2015-11-17 16:00,,2015-08-21 08:00,2015-09-03 16:00,2015-08-21 08:00,2015-09-03 16:00,2015-08-21 08:00,2015-09-03 16:00,2015-11-04 08:00,2015-11-17 16:00,,PT_Normal,,,,,qNivGXtLIECtjxwxf8Siag,ckkmvZhRRRaPbPVAYZp9LA,,,N,0,0,,,2014-04-05 12:28,2014-04-05 13:21,admin,admin,
2107,141850,1749,36223,642,0,N,N,N,CP_Drtn,TT_Task,DT_FixedDUR2,TK_NotStart,BL3-MEP-EL-5F-3030,Despature for Low Current  System Installation,4455,992,0,112,0,336,336,112,72752.164276,0,72752.164276,,,,2016-01-10 08:00,2016-01-23 16:00,,2015-09-08 08:00,2015-09-21 16:00,2015-09-08 08:00,2015-09-21 16:00,2015-09-08 08:00,2015-09-21 16:00,2016-01-10 08:00,2016-01-23 16:00,,PT_Normal,,,,,EAgnuIONjk6cFnMJ6pQYYg,DKvS11VPSTW1rfEcL/TSxQ,,,N,0,0,,,2014-04-05 12:28,2014-04-05 13:21,admin,admin,
2108,141851,1749,36223,642,0,N,N,N,CP_Drtn,TT_Task,DT_FixedDUR2,TK_NotStart,BL3-MEP-EL-5F-3050,Low Current  System Outlet installation and Connection,4455,992,816,80,0,80,80,80,3870.787498,0,3870.787498,,,,2016-01-24 08:00,2016-02-02 16:00,,2015-09-22 08:00,2015-10-01 16:00,2015-09-22 08:00,2015-10-01 16:00,2015-09-22 08:00,2015-10-01 16:00,2016-01-24 08:00,2016-02-02 16:00,,PT_Normal,,,,,iqkc++t/9EmbJn4284IpBA,LhO/Df7dS6uqza5Q7Y5rUg,,,N,0,0,,,2014-04-05 12:28,2014-04-05 13:21,admin,admin,
2109,141852,1749,36467,642,0,N,N,N,CP_Drtn,TT_Task,DT_FixedDUR2,TK_NotStart,BL3-MEP-AC-6F-2000,Duct Installation and Insulation,4454,112,0,168,0,263,263,168,4350.939473,0,4350.939473,,,,2015-08-16 08:00,2015-09-05 16:00,,2015-08-02 08:00,2015-08-22 16:00,2015-08-02 08:00,2015-08-22 16:00,2015-08-02 08:00,2015-08-22 16:00,2015-08-16 08:00,2015-09-05 16:00,,PT_Normal,,,,,u5cwlfiCuUWET4ZnTOYIiQ,T/WvzX7tQWuEp6u5vTjS+g,,,N,0,0,,,2014-04-05 12:28,2014-04-05 13:21,admin,admin,
2110,141853,1749,36467,642,0,N,N,N,CP_Drtn,TT_Task,DT_FixedDUR2,TK_NotStart,BL3-MEP-AC-6F-2030,Duct Accessories Installation,4457,256,56,112,0,448,448,112,666.965527,0,666.965527,,,,2015-09-24 08:00,2015-10-07 16:00,,2015-08-23 08:00,2015-09-05 16:00,2015-08-23 08:00,2015-09-05 16:00,2015-08-23 08:00,2015-09-05 16:00,2015-09-24 08:00,2015-10-07 16:00,,PT_Normal,,,,,Nj3VigIsXE2oxDEa7Azl2Q,sg1uTYchSE6wM87iVFFFUQ,,,N,0,0,,,2014-04-05 12:28,2014-04-05 13:21,admin,admin,
2111,141854,1749,36467,642,0,N,N,N,CP_Drtn,TT_Task,DT_FixedDUR2,TK_NotStart,BL3-MEP-AC-6F-2010,FCU's Installation,4457,320,72,64,0,192,192,64,6000.055155,0,6000.055155,,,,2015-09-21 08:00,2015-09-28 16:00,,2015-08-12 08:00,2015-08-19 16:00,2015-08-12 08:00,2015-08-19 16:00,2015-08-12 08:00,2015-08-19 16:00,2015-09-21 08:00,2015-09-28 16:00,,PT_Normal,,,,,1kR0q+PuG02BwZc7buZwig,8zTbCVdjTh6HWS0gWCbgZQ,,,N,0,0,,,2014-04-05 12:28,2014-04-05 13:21,admin,admin,
2112,141855,1749,36467,642,0,N,N,N,CP_Drtn,TT_Task,DT_FixedDUR2,TK_NotStart,BL3-MEP-AC-6F-2020,Chilled Water Pipes and Fittings Installation,4457,104,0,168,0,840,840,168,5251.194852,0,5251.194852,,,,2015-08-15 08:00,2015-09-04 16:00,,2015-08-02 08:00,2015-08-22 16:00,2015-08-02 08:00,2015-08-22 16:00,2015-08-02 08:00,2015-08-22 16:00,2015-08-15 08:00,2015-09-04 16:00,,PT_Normal,,,,,/OyxzeMxQkyy6jyxjljA7g,g/VYxAYITqmTirY8nHgnVQ,,,N,0,0,,,2014-04-05 12:28,2014-04-05 13:21,admin,admin,
2113,141856,1749,36467,642,0,N,N,N,CP_Drtn,TT_Task,DT_FixedDUR2,TK_NotStart,BL3-MEP-AC-6F-2040,Chilled Water Pipes Pressure Test,4457,248,0,48,0,96,96,48,587.116683,0,587.116683,,,,2015-09-23 08:00,2015-09-28 16:00,,2015-08-23 08:00,2015-08-28 16:00,2015-08-23 08:00,2015-08-28 16:00,2015-08-23 08:00,2015-08-28 16:00,2015-09-23 08:00,2015-09-28 16:00,,PT_Normal,,,,,NJLFcHs0IU6HwQMvk4YB7A,pNh7f5zQRxmpFYfpfGDw+g,,,N,0,0,,,2014-04-05 12:28,2014-04-05 13:21,admin,admin,
2114,141857,1749,36467,642,0,N,N,N,CP_Drtn,TT_Task,DT_FixedDUR2,TK_NotStart,BL3-MEP-AC-6F-2050,Chilled Water Pipes Insulation,4457,864,72,96,0,384,384,96,1670.208495,0,1670.208495,,,,2015-12-15 08:00,2015-12-26 16:00,,2015-08-29 08:00,2015-09-09 16:00,2015-08-29 08:00,2015-09-09 16:00,2015-08-29 08:00,2015-09-09 16:00,2015-12-15 08:00,2015-12-26 16:00,,PT_Normal,,,,,0lkpaJbXn0GrwvclL8FObw,CgOwKJCjQ8maZzOrgc5Klw,,,N,0,0,,,2014-04-05 12:28,2014-04-05 13:21,admin,admin,
2115,141858,1749,36467,642,0,N,N,N,CP_Drtn,TT_Task,DT_FixedDUR2,TK_NotStart,BL3-MEP-AC-6F-2060,Valve Package Installation,4457,248,0,48,0,96,96,48,2386.490429,0,2386.490429,,,,2015-09-29 08:00,2015-10-04 16:00,,2015-08-29 08:00,2015-09-03 16:00,2015-08-29 08:00,2015-09-03 16:00,2015-08-29 08:00,2015-09-03 16:00,2015-09-29 08:00,2015-10-04 16:00,,PT_Normal,,,,,EZo3YsisrkqlnEn5SSB8BQ,ZX5Adf2yRbykw+RaetnoqA,,,N,0,0,,,2014-04-05 12:28,2014-04-05 13:21,admin,admin,
2116,141859,1749,36467,642,0,N,N,N,CP_Drtn,TT_Task,DT_FixedDUR2,TK_NotStart,BL3-MEP-AC-6F-2070,FCU's Drain Pipes Installation,4457,248,136,24,0,48,48,24,519.927167,0,519.927167,,,,2015-10-05 08:00,2015-10-07 16:00,,2015-09-04 08:00,2015-09-06 16:00,2015-09-04 08:00,2015-09-06 16:00,2015-09-04 08:00,2015-09-06 16:00,2015-10-05 08:00,2015-10-07 16:00,,PT_Normal,,,,,XX7XrgLlPE2tzMuBmgeW/Q,P7n4FTwYQheq3kCzivae/Q,,,N,0,0,,,2014-04-05 12:28,2014-04-05 13:21,admin,admin,
2117,141860,1749,36463,642,0,N,N,N,CP_Drtn,TT_Task,DT_FixedDUR2,TK_NotStart,BL3-MEP-PL-6F-2030,Floor Drain Installation,,784,120,48,0,6,6,48,554.143324,0,554.143324,,,,2016-01-06 08:00,2016-01-11 16:00,,2015-09-30 08:00,2015-10-05 16:00,2015-09-30 08:00,2015-10-05 16:00,2015-09-30 08:00,2015-10-05 16:00,2016-01-06 08:00,2016-01-11 16:00,,PT_Normal,,,,,ewGEV4WvOUqB8Pk/g7CUyA,N4z1b15ATTyG8X3ozxUxQA,,,N,0,0,,,2014-04-05 12:28,2014-04-05 13:21,admin,admin,
2118,141861,1749,36463,642,0,N,N,N,CP_Drtn,TT_Task,DT_FixedDUR2,TK_NotStart,BL3-MEP-PL-6F-2000,High Level Water Supply Pipes and Fittings Installation,,176,0,168,0,150.02,150.02,168,1329.597866,0,1329.597866,,,,2015-08-24 08:00,2015-09-13 16:00,,2015-08-02 08:00,2015-08-22 16:00,2015-08-02 08:00,2015-08-22 16:00,2015-08-02 08:00,2015-08-22 16:00,2015-08-24 08:00,2015-09-13 16:00,,PT_Normal,,,,,sgEJqeqF2U+a5p3TZ8mpuw,iGvjZPmgQMmOQAa2wulXXg,,,N,0,0,,,2014-04-05 12:28,2014-04-05 13:21,admin,admin,
2119,141862,1749,36463,642,0,N,N,N,CP_Drtn,TT_Task,DT_FixedDUR2,TK_NotStart,BL3-MEP-PL-6F-2010,High Level Drainage Pipes Installation,,176,0,168,0,244.38,244.38,168,6583.525267,0,6583.525267,,,,2015-08-24 08:00,2015-09-13 16:00,,2015-08-02 08:00,2015-08-22 16:00,2015-08-02 08:00,2015-08-22 16:00,2015-08-02 08:00,2015-08-22 16:00,2015-08-24 08:00,2015-09-13 16:00,,PT_Normal,,,,,2prOm+X9TUa4HujJkn9QMw,VvxyDDKqThyoXRLykQTkdg,,,N,0,0,,,2014-04-05 12:28,2014-04-05 13:21,admin,admin,
2120,141863,1749,36463,642,0,N,N,N,CP_Drtn,TT_Task,DT_FixedDUR2,TK_NotStart,BL3-MEP-PL-6F-2020,Water Supply Pipes Pressure Test,4456,320,120,48,0,48,48,48,151.744312,0,151.744312,,,,2015-10-02 08:00,2015-10-07 16:00,,2015-08-23 08:00,2015-08-28 16:00,2015-08-23 08:00,2015-08-28 16:00,2015-08-23 08:00,2015-08-28 16:00,2015-10-02 08:00,2015-10-07 16:00,,PT_Normal,,,,,6Dl/dJV/HUqRDhYzuSGWyg,iumiqVr6Q9aSs1SiOuFdVA,,,N,0,0,,,2014-04-05 12:28,2014-04-05 13:21,admin,admin,
2121,141864,1749,36463,642,0,N,N,N,CP_Drtn,TT_Task,DT_FixedDUR2,TK_NotStart,BL3-MEP-PL-6F-2040,Drainage Pipes Gravity Test,,320,120,48,0,48,48,48,826.240719,0,826.240719,,,,2015-10-02 08:00,2015-10-07 16:00,,2015-08-23 08:00,2015-08-28 16:00,2015-08-23 08:00,2015-08-28 16:00,2015-08-23 08:00,2015-08-28 16:00,2015-10-02 08:00,2015-10-07 16:00,,PT_Normal,,,,,e7te8jY3c0ezzjr9W1Q89A,CrG7mLlqR22lCrg84w8eQQ,,,N,0,0,,,2014-04-05 12:28,2014-04-05 13:21,admin,admin,
2122,141865,1749,36403,642,0,N,N,N,CP_Drtn,TT_Task,DT_FixedDUR2,TK_NotStart,BL3-MEP-PL-6F-1000,Low Level Water Supply Pipes Installation,,184,8,96,0,42,42,96,725.216846,0,725.216846,,,,2015-08-12 08:00,2015-08-23 16:00,,2015-07-20 08:00,2015-07-31 16:00,2015-07-20 08:00,2015-07-31 16:00,2015-07-20 08:00,2015-07-31 16:00,2015-08-12 08:00,2015-08-23 16:00,,PT_Normal,,,,,Yto8SEBypEWrQx9A+yzYUQ,oYPZSXW7T7SkhnZgnAdMqw,,,N,0,0,,,2014-04-05 12:28,2014-04-05 13:21,admin,admin,
2123,141866,1749,36403,642,0,N,N,N,CP_Drtn,TT_Task,DT_FixedDUR2,TK_NotStart,BL3-MEP-PL-6F-1010,Low Level Drainage Pipes Installation,,184,8,96,0,12.67,12.67,96,2291.461713,0,2291.461713,,,,2015-08-12 08:00,2015-08-23 16:00,,2015-07-20 08:00,2015-07-31 16:00,2015-07-20 08:00,2015-07-31 16:00,2015-07-20 08:00,2015-07-31 16:00,2015-08-12 08:00,2015-08-23 16:00,,PT_Normal,,,,,AAN5roGqckigsANhghNhQA,9A98EzOQRO2Nm/GnDg0INQ,,,N,0,0,,,2014-04-05 12:28,2014-04-05 13:21,admin,admin,
2124,141867,1749,36403,642,0,N,N,N,CP_Drtn,TT_Task,DT_FixedDUR2,TK_NotStart,BL3-MEP-PL-6F-1020,Supports  installation for High level Pipes,,184,8,96,0,16.352,16.352,96,831.682549,0,831.682549,,,,2015-08-12 08:00,2015-08-23 16:00,,2015-07-20 08:00,2015-07-31 16:00,2015-07-20 08:00,2015-07-31 16:00,2015-07-20 08:00,2015-07-31 16:00,2015-08-12 08:00,2015-08-23 16:00,,PT_Normal,,,,,GpN/U6UHSkiPNTonr4rioQ,krvf4sBUT2O6t09Pq9dEwQ,,,N,0,0,,,2014-04-05 12:28,2014-04-05 13:21,admin,admin,
2125,141868,1749,36163,642,0,N,N,N,CP_Drtn,TT_Task,DT_FixedDUR2,TK_NotStart,BL3-MEP-EL-6F-1000,PVC Back Boxes and Conduits  Fixing in Wall,,56,0,176,0,384,384,176,3329.67233,0,3329.67233,,,,2015-07-21 08:00,2015-08-11 16:00,,2015-07-14 08:00,2015-08-04 16:00,2015-07-14 08:00,2015-08-04 16:00,2015-07-14 08:00,2015-08-04 16:00,2015-07-21 08:00,2015-08-11 16:00,,PT_Normal,,,,,1+H969KmHEygMhTvIn2feg,ymKyi8CPRUaS8eVYe6fv7Q,,,N,0,0,,,2014-04-05 12:28,2014-04-05 13:21,admin,admin,
2126,141869,1749,36163,642,0,N,N,N,CP_Drtn,TT_Task,DT_FixedDUR2,TK_NotStart,BL3-MEP-EL-6F-1010,DB's Inclosure Fixing,4455,200,96,48,0,96,96,48,2136.399392,0,2136.399392,,,,2015-08-20 08:00,2015-08-25 16:00,,2015-07-26 08:00,2015-07-31 16:00,2015-07-26 08:00,2015-07-31 16:00,2015-07-26 08:00,2015-07-31 16:00,2015-08-20 08:00,2015-08-25 16:00,,PT_Normal,,,,,LnxMXV9hn0OW63UOzkOrcg,Zn+WAK9ITmGN6VY5n36awA,,,N,0,0,,,2014-04-05 12:28,2014-04-05 13:21,admin,admin,
2127,141870,1749,36164,642,0,N,N,N,CP_Drtn,TT_Task,DT_FixedDUR2,TK_NotStart,BL3-MEP-EL-6F-2060,SMDB's  Installation,,1008,120,48,0,45,45,48,4202.598932,0,4202.598932,,,,2016-01-04 08:00,2016-01-09 16:00,,2015-08-31 08:00,2015-09-05 16:00,2015-08-31 08:00,2015-09-05 16:00,2015-08-31 08:00,2015-09-05 16:00,2016-01-04 08:00,2016-01-09 16:00,,PT_Normal,,,,,7LWbQekwY0uhW+99RbnGQg,IZWYMtM0TmiggtgRXzi+OQ,,,N,0,0,,,2014-04-05 12:28,2014-04-05 13:21,admin,admin,
2128,141871,1749,36164,642,0,N,N,N,CP_Drtn,TT_Task,DT_FixedDUR2,TK_NotStart,BL3-MEP-EL-6F-2000,Lighting  Wiring,,392,56,96,0,241.713,241.713,96,3578.08423,0,3578.08423,,,,2015-09-26 08:00,2015-10-07 16:00,,2015-08-08 08:00,2015-08-19 16:00,2015-08-08 08:00,2015-08-19 16:00,2015-08-08 08:00,2015-08-19 16:00,2015-09-26 08:00,2015-10-07 16:00,,PT_Normal,,,,,f501K1i7/kmfFRKMux63JQ,ZQBxpvKGSUuilDakAQsVWw,,,N,0,0,,,2014-04-05 12:28,2014-04-05 13:21,admin,admin,
2129,141872,1749,36164,642,0,N,N,N,CP_Drtn,TT_Task,DT_FixedDUR2,TK_NotStart,BL3-MEP-EL-6F-2010,Power Points Wiring,,392,56,96,0,192,192,96,2906.213289,0,2906.213289,,,,2015-09-26 08:00,2015-10-07 16:00,,2015-08-08 08:00,2015-08-19 16:00,2015-08-08 08:00,2015-08-19 16:00,2015-08-08 08:00,2015-08-19 16:00,2015-09-26 08:00,2015-10-07 16:00,,PT_Normal,,,,,2K0lMbGjGEa+9AT6MGuznQ,VE3fCIFzTh2jWmUqFrBfSA,,,N,0,0,,,2014-04-05 12:28,2014-04-05 13:21,admin,admin,
2130,141873,1749,36164,642,0,N,N,N,CP_Drtn,TT_Task,DT_FixedDUR2,TK_NotStart,BL3-MEP-EL-6F-2020,Cable Tray and Trunking Installation,,392,40,112,0,336,336,112,9078.448617,0,9078.448617,,,,2015-09-24 08:00,2015-10-07 16:00,,2015-08-06 08:00,2015-08-19 16:00,2015-08-06 08:00,2015-08-19 16:00,2015-08-06 08:00,2015-08-19 16:00,2015-09-24 08:00,2015-10-07 16:00,,PT_Normal,,,,,0VYPv/feFkepX/l+5BbuGg,FCavk07KQDGeZq1KsyPmqQ,,,N,0,0,,,2014-04-05 12:28,2014-04-05 13:21,admin,admin,
2131,141874,1749,36164,642,0,N,N,N,CP_Drtn,TT_Task,DT_FixedDUR2,TK_NotStart,BL3-MEP-EL-6F-2030,Emergency Light Wiring,,392,88,64,0,128,128,64,1210.028798,0,1210.028798,,,,2015-09-30 08:00,2015-10-07 16:00,,2015-08-12 08:00,2015-08-19 16:00,2015-08-12 08:00,2015-08-19 16:00,2015-08-12 08:00,2015-08-19 16:00,2015-09-30 08:00,2015-10-07 16:00,,PT_Normal,,,,,Zn17o7C70U2WH4fj3DtYBA,d/1aQHROTximoIdYNdPj1A,,,N,0,0,,,2014-04-05 12:28,2014-04-05 13:21,admin,admin,
2132,141875,1749,36164,642,0,N,N,N,CP_Drtn,TT_Task,DT_FixedDUR2,TK_NotStart,BL3-MEP-EL-6F-2040,Fire Alarm System Wiring,,392,56,96,0,192,192,96,7123.009694,0,7123.009694,,,,2015-09-26 08:00,2015-10-07 16:00,,2015-08-08 08:00,2015-08-19 16:00,2015-08-08 08:00,2015-08-19 16:00,2015-08-08 08:00,2015-08-19 16:00,2015-09-26 08:00,2015-10-07 16:00,,PT_Normal,,,,,YvZmKWred0Kf1jVopY4vKA,+ZOlOHjeTbeFgk79Tmiixg,,,N,0,0,,,2014-04-05 12:28,2014-04-05 13:21,admin,admin,
2133,141876,1749,36164,642,0,N,N,N,CP_Drtn,TT_Task,DT_FixedDUR2,TK_NotStart,BL3-MEP-EL-6F-2070,DB's Installation and Termination,4455,208,0,96,0,288,288,96,4982.925025,0,4982.925025,,,,2015-09-26 08:00,2015-10-07 16:00,,2015-08-31 08:00,2015-09-11 16:00,2015-08-31 08:00,2015-09-11 16:00,2015-08-31 08:00,2015-09-11 16:00,2015-09-26 08:00,2015-10-07 16:00,,PT_Normal,,,,,KcYOeHw4x0mCEbgdtnnzUQ,jwv1Su4OSHOUAIlZcR40CQ,,,N,0,0,,,2014-04-05 12:28,2014-04-05 13:21,admin,admin,
2134,141877,1749,36164,642,0,N,N,N,CP_Drtn,TT_Task,DT_FixedDUR2,TK_NotStart,BL3-MEP-EL-6F-2050,Low Current  System Wiring,4455,1160,328,112,0,244,244,112,38231.783306,0,38231.783306,,,,2015-12-29 08:00,2016-01-11 16:00,,2015-08-06 08:00,2015-08-19 16:00,2015-08-06 08:00,2015-08-19 16:00,2015-08-06 08:00,2015-08-19 16:00,2015-12-29 08:00,2016-01-11 16:00,,PT_Normal,,,,,7ltcutae6Uqxx3N6WiEoFg,wk8zjWdTReqUheR+39XjdA,,,N,0,0,,,2014-04-05 12:28,2014-04-05 13:21,admin,admin,
2135,141878,1749,36057,642,0,N,N,N,CP_Drtn,TT_Task,DT_FixedDUR2,TK_NotStart,BL3-MEP-EL-6F-3000,Lights Fitting Fixing,,440,56,112,0,244,244,112,7336.659378,0,7336.659378,,,,2015-11-24 08:00,2015-12-07 16:00,,2015-09-30 08:00,2015-10-13 16:00,2015-09-30 08:00,2015-10-13 16:00,2015-09-30 08:00,2015-10-13 16:00,2015-11-24 08:00,2015-12-07 16:00,,PT_Normal,,,,,tD1QUv9J0EyoTkMxRbRkHg,CDUm+mGYRRa2apaFIjcHjA,,,N,0,0,,,2014-04-05 12:28,2014-04-05 13:21,admin,admin,
2136,141879,1749,36057,642,0,N,N,N,CP_Drtn,TT_Task,DT_FixedDUR2,TK_NotStart,BL3-MEP-EL-6F-3070,Sockets and Switches Fixing,,728,104,64,0,128,128,64,1174.957134,0,1174.957134,,,,2015-12-30 08:00,2016-01-06 16:00,,2015-09-30 08:00,2015-10-07 16:00,2015-09-30 08:00,2015-10-07 16:00,2015-09-30 08:00,2015-10-07 16:00,2015-12-30 08:00,2016-01-06 16:00,,PT_Normal,,,,,o1LXFHpLYECWU4EaM2sipg,CQ8Oz8kRS1KMyh1Rbt8WLA,,,N,0,0,,,2014-04-05 12:28,2014-04-05 13:21,admin,admin,
2137,141880,1749,36057,642,0,N,N,N,CP_Drtn,TT_Task,DT_FixedDUR2,TK_NotStart,BL3-MEP-EL-6F-3020,Emergency Light Fixing,,768,104,64,0,128,128,64,5722.024623,0,5722.024623,,,,2016-01-04 08:00,2016-01-11 16:00,,2015-09-30 08:00,2015-10-07 16:00,2015-09-30 08:00,2015-10-07 16:00,2015-09-30 08:00,2015-10-07 16:00,2016-01-04 08:00,2016-01-11 16:00,,PT_Normal,,,,,5fDuyptIe0+D7gv+kLRVBw,9MAbhRybSVGWRvcVXfxM4g,,,N,0,0,,,2014-04-05 12:28,2014-04-05 13:21,admin,admin,
2138,141881,1749,36057,642,0,N,N,N,CP_Drtn,TT_Task,DT_FixedDUR2,TK_NotStart,BL3-MEP-EL-6F-3030,Fire Alarm System Detector Installation,,536,72,96,0,192,192,96,4046.378277,0,4046.378277,,,,2015-12-06 08:00,2015-12-17 16:00,,2015-09-30 08:00,2015-10-11 16:00,2015-09-30 08:00,2015-10-11 16:00,2015-09-30 08:00,2015-10-11 16:00,2015-12-06 08:00,2015-12-17 16:00,,PT_Normal,,,,,gdSLtLt8RUiKF9SghjxWfw,0w1ok6AbTIuUU5ihDKVOzg,,,N,0,0,,,2014-04-05 12:28,2014-04-05 13:21,admin,admin,
2139,141882,1749,36057,642,0,N,N,N,CP_Drtn,TT_Task,DT_FixedDUR2,TK_NotStart,BL3-MEP-EL-6F-3050,SMDB's  Termination and Final Connection,,816,120,48,0,192,192,48,2791.825001,0,2791.825001,,,,2016-01-10 08:00,2016-01-15 16:00,,2015-09-30 08:00,2015-10-05 16:00,2015-09-30 08:00,2015-10-05 16:00,2015-09-30 08:00,2015-10-05 16:00,2016-01-10 08:00,2016-01-15 16:00,,PT_Normal,,,,,O+jl3Hky7U2XFSgfm+7CmQ,Oq7IdmJkR8yHXzGnpPAD9g,,,N,0,0,,,2014-04-05 12:28,2014-04-05 13:21,admin,admin,
2140,141883,1749,36164,642,0,N,N,N,CP_Drtn,TT_Task,DT_FixedDUR2,TK_NotStart,BL3-MEP-EL-6F-3010,Power Cable Puling,,536,32,112,0,168,168,112,6375.759893,0,6375.759893,,,,2015-11-18 08:00,2015-12-01 16:00,,2015-09-12 08:00,2015-09-25 16:00,2015-09-12 08:00,2015-09-25 16:00,2015-09-12 08:00,2015-09-25 16:00,2015-11-18 08:00,2015-12-01 16:00,,PT_Normal,,,,,FoQ5fxFcH0mBaCuFadMufA,5Q+3TCz4QN2ZNaYuSGu0Ag,,,N,0,0,,,2014-04-05 12:28,2014-04-05 13:21,admin,admin,
2141,141884,1749,36057,642,0,N,N,N,CP_Drtn,TT_Task,DT_FixedDUR2,TK_NotStart,BL3-MEP-EL-6F-3040,Despature for Low Current  System Installation,4455,832,0,112,0,336,336,112,72752.164276,0,72752.164276,,,,2016-01-12 08:00,2016-01-25 16:00,,2015-09-30 08:00,2015-10-13 16:00,2015-09-30 08:00,2015-10-13 16:00,2015-09-30 08:00,2015-10-13 16:00,2016-01-12 08:00,2016-01-25 16:00,,PT_Normal,,,,,sTkIK331gUelPZAe+/SNeg,N/cOfk0tTgWmVVL2h+C2hA,,,N,0,0,,,2014-04-05 12:28,2014-04-05 13:21,admin,admin,
2142,141885,1749,36057,642,0,N,N,N,CP_Drtn,TT_Task,DT_FixedDUR2,TK_NotStart,BL3-MEP-EL-6F-3060,Low Current  System Outlet installation and Connection,4455,832,688,80,0,80,80,80,3870.787498,0,3870.787498,,,,2016-01-26 08:00,2016-02-04 16:00,,2015-10-14 08:00,2015-10-23 16:00,2015-10-14 08:00,2015-10-23 16:00,2015-10-14 08:00,2015-10-23 16:00,2016-01-26 08:00,2016-02-04 16:00,,PT_Normal,,,,,IHKBhkls8ki87vLQ4OeAvg,jZRs3ma7T8if1LovDnjtzw,,,N,0,0,,,2014-04-05 12:28,2014-04-05 13:21,admin,admin,
2143,141886,1749,36554,642,0,N,N,N,CP_Drtn,TT_Task,DT_FixedDUR2,TK_NotStart,BL3-MEP-AC-7F-1000,Supports and Hungers Fixing,,112,8,96,0,192,192,96,338.467259,0,338.467259,,,,2015-08-24 08:00,2015-09-04 16:00,,2015-08-10 08:00,2015-08-21 16:00,2015-08-10 08:00,2015-08-21 16:00,2015-08-10 08:00,2015-08-21 16:00,2015-08-24 08:00,2015-09-04 16:00,,PT_Normal,,,,,6e4V/ySy4kytZxzQnywEOA,BW5IhmW1SbCvjaWVAZKiAA,,,N,0,0,,,2014-04-05 12:28,2014-04-05 13:21,admin,admin,
2144,141887,1749,36344,642,0,N,N,N,CP_Drtn,TT_Task,DT_FixedDUR2,TK_NotStart,BL3-MEP-AC-7F-2000,Duct Installation and Insulation,4454,112,0,168,0,263,263,168,4350.939473,0,4350.939473,,,,2015-09-06 08:00,2015-09-26 16:00,,2015-08-23 08:00,2015-09-12 16:00,2015-08-23 08:00,2015-09-12 16:00,2015-08-23 08:00,2015-09-12 16:00,2015-09-06 08:00,2015-09-26 16:00,,PT_Normal,,,,,/yDsJ33DMkeiGHUK51fuKA,3d9bXOCwSb2ghJPMTPmt0Q,,,N,0,0,,,2014-04-05 12:28,2014-04-05 13:21,admin,admin,
2145,141888,1749,36344,642,0,N,N,N,CP_Drtn,TT_Task,DT_FixedDUR2,TK_NotStart,BL3-MEP-AC-7F-2030,Duct Accessories Installation,4457,208,56,112,0,448,448,112,666.965527,0,666.965527,,,,2015-10-09 08:00,2015-10-22 16:00,,2015-09-13 08:00,2015-09-26 16:00,2015-09-13 08:00,2015-09-26 16:00,2015-09-13 08:00,2015-09-26 16:00,2015-10-09 08:00,2015-10-22 16:00,,PT_Normal,,,,,qsApapKJIU6a1CPQ+4rzlA,a1hcD+9PRdu8xzEjM3mCFQ,,,N,0,0,,,2014-04-05 12:28,2014-04-05 13:21,admin,admin,
2146,141889,1749,36344,642,0,N,N,N,CP_Drtn,TT_Task,DT_FixedDUR2,TK_NotStart,BL3-MEP-AC-7F-2010,FCU's Installation,4457,288,88,64,0,192,192,64,6000.055155,0,6000.055155,,,,2015-10-06 08:00,2015-10-13 16:00,,2015-08-31 08:00,2015-09-07 16:00,2015-08-31 08:00,2015-09-07 16:00,2015-08-31 08:00,2015-09-07 16:00,2015-10-06 08:00,2015-10-13 16:00,,PT_Normal,,,,,bCA7RYcDpECLidEGC94oGA,HALDNznaS5KJDFiBk0kYmw,,,N,0,0,,,2014-04-05 12:28,2014-04-05 13:21,admin,admin,
2147,141890,1749,36344,642,0,N,N,N,CP_Drtn,TT_Task,DT_FixedDUR2,TK_NotStart,BL3-MEP-AC-7F-2020,Chilled Water Pipes and Fittings Installation,4457,104,0,168,0,840,840,168,5251.194852,0,5251.194852,,,,2015-09-05 08:00,2015-09-25 16:00,,2015-08-23 08:00,2015-09-12 16:00,2015-08-23 08:00,2015-09-12 16:00,2015-08-23 08:00,2015-09-12 16:00,2015-09-05 08:00,2015-09-25 16:00,,PT_Normal,,,,,2hUolqmWpk+J9r3R8S6LVw,J40N5gG3TZqKBOMKULyOeg,,,N,0,0,,,2014-04-05 12:28,2014-04-05 13:21,admin,admin,
2148,141891,1749,36344,642,0,N,N,N,CP_Drtn,TT_Task,DT_FixedDUR2,TK_NotStart,BL3-MEP-AC-7F-2040,Chilled Water Pipes Pressure Test,4457,200,0,48,0,96,96,48,587.116683,0,587.116683,,,,2015-10-08 08:00,2015-10-13 16:00,,2015-09-13 08:00,2015-09-18 16:00,2015-09-13 08:00,2015-09-18 16:00,2015-09-13 08:00,2015-09-18 16:00,2015-10-08 08:00,2015-10-13 16:00,,PT_Normal,,,,,ZuJ+1tgRR0GodFHg/N6n1w,MkeQ/qaFSjKQLXs/i0OVkw,,,N,0,0,,,2014-04-05 12:28,2014-04-05 13:21,admin,admin,
2149,141892,1749,36344,642,0,N,N,N,CP_Drtn,TT_Task,DT_FixedDUR2,TK_NotStart,BL3-MEP-AC-7F-2050,Chilled Water Pipes Insulation,4457,792,72,96,0,384,384,96,1670.208495,0,1670.208495,,,,2015-12-27 08:00,2016-01-07 16:00,,2015-09-19 08:00,2015-09-30 16:00,2015-09-19 08:00,2015-09-30 16:00,2015-09-19 08:00,2015-09-30 16:00,2015-12-27 08:00,2016-01-07 16:00,,PT_Normal,,,,,pMBk0vk5YUafgil2hVZpvg,Onci2LOUTq2OS3IvwV3Ibg,,,N,0,0,,,2014-04-05 12:28,2014-04-05 13:21,admin,admin,
2150,141893,1749,36344,642,0,N,N,N,CP_Drtn,TT_Task,DT_FixedDUR2,TK_NotStart,BL3-MEP-AC-7F-2060,Valve Package Installation,4457,200,0,48,0,96,96,48,2386.490429,0,2386.490429,,,,2015-10-14 08:00,2015-10-19 16:00,,2015-09-19 08:00,2015-09-24 16:00,2015-09-19 08:00,2015-09-24 16:00,2015-09-19 08:00,2015-09-24 16:00,2015-10-14 08:00,2015-10-19 16:00,,PT_Normal,,,,,/craPQLYkUWxwMLyrxes2Q,mMNz5pbBQmuEe6oKm32ZXQ,,,N,0,0,,,2014-04-05 12:28,2014-04-05 13:21,admin,admin,
2151,141894,1749,36344,642,0,N,N,N,CP_Drtn,TT_Task,DT_FixedDUR2,TK_NotStart,BL3-MEP-AC-7F-2070,FCU's Drain Pipes Installation,4457,200,136,24,0,48,48,24,519.927167,0,519.927167,,,,2015-10-20 08:00,2015-10-22 16:00,,2015-09-25 08:00,2015-09-27 16:00,2015-09-25 08:00,2015-09-27 16:00,2015-09-25 08:00,2015-09-27 16:00,2015-10-20 08:00,2015-10-22 16:00,,PT_Normal,,,,,xBtmsNoPFUSyww+QqLRIkg,nplbNdYsSGGNCw57XDfj1A,,,N,0,0,,,2014-04-05 12:28,2014-04-05 13:21,admin,admin,
2152,141895,1749,36446,642,0,N,N,N,CP_Drtn,TT_Task,DT_FixedDUR2,TK_NotStart,BL3-MEP-AC-7F-3000,Grills and Diffusers Fixing,,536,56,96,0,384,384,96,11550.608192,0,11550.608192,,,,2015-12-27 08:00,2016-01-07 16:00,,2015-10-21 08:00,2015-11-01 16:00,2015-10-21 08:00,2015-11-01 16:00,2015-10-21 08:00,2015-11-01 16:00,2015-12-27 08:00,2016-01-07 16:00,,PT_Normal,,,,,FEAROOFyi0er4ygiJv3szA,ZbGE40cPTwWJrW+h5oTYdA,,,N,0,0,,,2014-04-05 12:28,2014-04-05 13:21,admin,admin,
2153,141896,1749,36389,642,0,N,N,N,CP_Drtn,TT_Task,DT_FixedDUR2,TK_NotStart,BL3-MEP-PL-7F-1000,Low Level Water Supply Pipes Installation,,144,8,96,0,42,42,96,725.216846,0,725.216846,,,,2015-08-28 08:00,2015-09-08 16:00,,2015-08-10 08:00,2015-08-21 16:00,2015-08-10 08:00,2015-08-21 16:00,2015-08-10 08:00,2015-08-21 16:00,2015-08-28 08:00,2015-09-08 16:00,,PT_Normal,,,,,nt54EthWMUyGFKGL45eVUw,mGpYpYb8QOCBmQHJfpv2tg,,,N,0,0,,,2014-04-05 12:28,2014-04-05 13:21,admin,admin,
2154,141897,1749,36389,642,0,N,N,N,CP_Drtn,TT_Task,DT_FixedDUR2,TK_NotStart,BL3-MEP-PL-7F-1010,Low Level Drainage Pipes Installation,,144,8,96,0,12.67,12.67,96,2291.461713,0,2291.461713,,,,2015-08-28 08:00,2015-09-08 16:00,,2015-08-10 08:00,2015-08-21 16:00,2015-08-10 08:00,2015-08-21 16:00,2015-08-10 08:00,2015-08-21 16:00,2015-08-28 08:00,2015-09-08 16:00,,PT_Normal,,,,,dBlgjMjKK02EknSDOcF7Dw,0UAf5yrOThq0cSInyygz5w,,,N,0,0,,,2014-04-05 12:28,2014-04-05 13:21,admin,admin,
2155,141898,1749,36389,642,0,N,N,N,CP_Drtn,TT_Task,DT_FixedDUR2,TK_NotStart,BL3-MEP-PL-7F-1020,Supports  installation for High level Pipes,,184,8,96,0,16.352,16.352,96,831.682549,0,831.682549,,,,2015-09-02 08:00,2015-09-13 16:00,,2015-08-10 08:00,2015-08-21 16:00,2015-08-10 08:00,2015-08-21 16:00,2015-08-10 08:00,2015-08-21 16:00,2015-09-02 08:00,2015-09-13 16:00,,PT_Normal,,,,,Dzm20Moef0qKvXvHaADydg,zpvokn41T0uNzB1BpvIRxA,,,N,0,0,,,2014-04-05 12:28,2014-04-05 13:21,admin,admin,
2156,141899,1749,36349,642,0,N,N,N,CP_Drtn,TT_Task,DT_FixedDUR2,TK_NotStart,BL3-MEP-PL-7F-2030,Floor Drain Installation,,664,104,48,0,6,6,48,554.143324,0,554.143324,,,,2016-01-12 08:00,2016-01-17 16:00,,2015-10-21 08:00,2015-10-26 16:00,2015-10-21 08:00,2015-10-26 16:00,2015-10-21 08:00,2015-10-26 16:00,2016-01-12 08:00,2016-01-17 16:00,,PT_Normal,,,,,dsA5KWsswk+Dq9yY696nEA,aq8mbsHMR2GXbxz8cEInDg,,,N,0,0,,,2014-04-05 12:28,2014-04-05 13:21,admin,admin,
2157,141900,1749,36349,642,0,N,N,N,CP_Drtn,TT_Task,DT_FixedDUR2,TK_NotStart,BL3-MEP-PL-7F-2000,High Level Water Supply Pipes and Fittings Installation,,176,0,168,0,150.02,150.02,168,1329.597866,0,1329.597866,,,,2015-09-14 08:00,2015-10-04 16:00,,2015-08-23 08:00,2015-09-12 16:00,2015-08-23 08:00,2015-09-12 16:00,2015-08-23 08:00,2015-09-12 16:00,2015-09-14 08:00,2015-10-04 16:00,,PT_Normal,,,,,JJokuni4nEqgqOJ820ecUA,8Z8r7aMwTZe8KdVDjI1PZQ,,,N,0,0,,,2014-04-05 12:28,2014-04-05 13:21,admin,admin,
2158,141901,1749,36349,642,0,N,N,N,CP_Drtn,TT_Task,DT_FixedDUR2,TK_NotStart,BL3-MEP-PL-7F-2010,High Level Drainage Pipes Installation,,176,0,168,0,244.38,244.38,168,6583.525267,0,6583.525267,,,,2015-09-14 08:00,2015-10-04 16:00,,2015-08-23 08:00,2015-09-12 16:00,2015-08-23 08:00,2015-09-12 16:00,2015-08-23 08:00,2015-09-12 16:00,2015-09-14 08:00,2015-10-04 16:00,,PT_Normal,,,,,5Jbfd2hZ50+is7hnN4KycQ,AjTKxIFvTpOqN3kXQQ0Srw,,,N,0,0,,,2014-04-05 12:28,2014-04-05 13:21,admin,admin,
2159,141902,1749,36349,642,0,N,N,N,CP_Drtn,TT_Task,DT_FixedDUR2,TK_NotStart,BL3-MEP-PL-7F-2020,Water Supply Pipes Pressure Test,4456,272,120,48,0,48,48,48,151.744312,0,151.744312,,,,2015-10-17 08:00,2015-10-22 16:00,,2015-09-13 08:00,2015-09-18 16:00,2015-09-13 08:00,2015-09-18 16:00,2015-09-13 08:00,2015-09-18 16:00,2015-10-17 08:00,2015-10-22 16:00,,PT_Normal,,,,,7KyHMlVtNU+hexuWLA7+VA,Fi7CXN3qRFaJ3Rg1xeH26g,,,N,0,0,,,2014-04-05 12:28,2014-04-05 13:21,admin,admin,
2160,141903,1749,36349,642,0,N,N,N,CP_Drtn,TT_Task,DT_FixedDUR2,TK_NotStart,BL3-MEP-PL-7F-2040,Drainage Pipes Gravity Test,,272,120,48,0,48,48,48,826.240719,0,826.240719,,,,2015-10-17 08:00,2015-10-22 16:00,,2015-09-13 08:00,2015-09-18 16:00,2015-09-13 08:00,2015-09-18 16:00,2015-09-13 08:00,2015-09-18 16:00,2015-10-17 08:00,2015-10-22 16:00,,PT_Normal,,,,,2lKJnmDb1EWYvVd4J6e+Qw,jtcNJxD9R0Snj532WT1tXg,,,N,0,0,,,2014-04-05 12:28,2014-04-05 13:21,admin,admin,
2161,141904,1749,36432,642,0,N,N,N,CP_Drtn,TT_Task,DT_FixedDUR2,TK_NotStart,BL3-MEP-PL-7F-3000,Sanitary Ware Installation Including Connection,,80,0,112,0,383.862,383.862,112,4453.516455,0,4453.516455,,,,2015-11-30 08:00,2015-12-13 16:00,,2015-11-20 08:00,2015-12-03 16:00,2015-11-20 08:00,2015-12-03 16:00,2015-11-20 08:00,2015-12-03 16:00,2015-11-30 08:00,2015-12-13 16:00,,PT_Normal,,,,,6Q7L4V3DhEmjmvkdXlGVbg,HmcYZYASQ6qKb8HQ4Pbdxg,,,N,0,0,,,2014-04-05 12:28,2014-04-05 13:21,admin,admin,
2162,141905,1749,36432,642,0,N,N,N,CP_Drtn,TT_Task,DT_FixedDUR2,TK_NotStart,BL3-MEP-PL-7F-3010,Sanitary Ware Accessories Installation,,272,104,48,0,36.45,36.45,48,166.215378,0,166.215378,,,,2016-01-07 08:00,2016-01-12 16:00,,2015-12-04 08:00,2015-12-09 16:00,2015-12-04 08:00,2015-12-09 16:00,2015-12-04 08:00,2015-12-09 16:00,2016-01-07 08:00,2016-01-12 16:00,,PT_Normal,,,,,N1QcCVz9RUWncPfT+jMRag,33rcgqIjQAOHFxpM3TVB0A,,,N,0,0,,,2014-04-05 12:28,2014-04-05 13:21,admin,admin,
2163,141906,1749,36352,642,0,N,N,N,CP_Drtn,TT_Task,DT_FixedDUR2,TK_NotStart,BL3-MEP-FF-7F-3000,Fire Extinguisher Installation,,112,32,16,0,8,8,16,1076.993507,0,1076.993507,,,,2016-02-02 08:00,2016-02-03 16:00,,2016-01-19 08:00,2016-01-20 16:00,2016-01-19 08:00,2016-01-20 16:00,2016-01-19 08:00,2016-01-20 16:00,2016-02-02 08:00,2016-02-03 16:00,,PT_Normal,,,,,K7qTfup5kka7tGTw0fhpcw,d3RgJYXVTaujf9qa+DxJwQ,,,N,0,0,,,2014-04-05 12:28,2014-04-05 13:21,admin,admin,
2164,141907,1749,36352,642,0,N,N,N,CP_Drtn,TT_Task,DT_FixedDUR2,TK_NotStart,BL3-MEP-FF-7F-3010,Hose reel Cabinet Installation and Connection,,48,0,48,0,192,192,48,1336.852298,0,1336.852298,,,,2016-01-24 08:00,2016-01-29 16:00,,2016-01-18 08:00,2016-01-23 16:00,2016-01-18 08:00,2016-01-23 16:00,2016-01-18 08:00,2016-01-23 16:00,2016-01-24 08:00,2016-01-29 16:00,,PT_Normal,,,,,eqeIOWeU40CzTjQGcjulsA,029vlznCTFibRn7++Kg6Bw,,,N,0,0,,,2014-04-05 12:28,2014-04-05 13:21,admin,admin,
2165,141908,1749,36245,642,0,N,N,N,CP_Drtn,TT_Task,DT_FixedDUR2,TK_NotStart,BL3-MEP-EL-7F-1000,PVC Back Boxes and Conduits  Fixing in Wall,,56,0,176,0,384,384,176,3329.67233,0,3329.67233,,,,2015-08-12 08:00,2015-09-02 16:00,,2015-08-05 08:00,2015-08-26 16:00,2015-08-05 08:00,2015-08-26 16:00,2015-08-05 08:00,2015-08-26 16:00,2015-08-12 08:00,2015-09-02 16:00,,PT_Normal,,,,,o+gG3BekGEqDW8ArxwcKFA,o4YNz9B7TBqLk4hEbwW97g,,,N,0,0,,,2014-04-05 12:28,2014-04-05 13:21,admin,admin,
2166,141909,1749,36245,642,0,N,N,N,CP_Drtn,TT_Task,DT_FixedDUR2,TK_NotStart,BL3-MEP-EL-7F-1010,DB's Inclosure Fixing,4455,144,80,48,0,96,96,48,2136.399392,0,2136.399392,,,,2015-09-03 08:00,2015-09-08 16:00,,2015-08-16 08:00,2015-08-21 16:00,2015-08-16 08:00,2015-08-21 16:00,2015-08-16 08:00,2015-08-21 16:00,2015-09-03 08:00,2015-09-08 16:00,,PT_Normal,,,,,bejqB0kxjUCIfxMjhLLtUg,kiNH4qQWTnGcKtOP5P8mmw,,,N,0,0,,,2014-04-05 12:28,2014-04-05 13:21,admin,admin,
2167,141910,1749,36079,642,0,N,N,N,CP_Drtn,TT_Task,DT_FixedDUR2,TK_NotStart,BL3-MEP-EL-7F-2060,SMDB's  Installation,,888,104,48,0,45,45,48,4202.598932,0,4202.598932,,,,2016-01-10 08:00,2016-01-15 16:00,,2015-09-21 08:00,2015-09-26 16:00,2015-09-21 08:00,2015-09-26 16:00,2015-09-21 08:00,2015-09-26 16:00,2016-01-10 08:00,2016-01-15 16:00,,PT_Normal,,,,,AqFMWlp5KUu5LTkFVMLxCw,2Z1XTg3iTfGLUY/zVWL2ZA,,,N,0,0,,,2014-04-05 12:28,2014-04-05 13:21,admin,admin,
2168,141911,1749,36079,642,0,N,N,N,CP_Drtn,TT_Task,DT_FixedDUR2,TK_NotStart,BL3-MEP-EL-7F-2000,Lighting  Wiring,,360,80,96,0,241.713,241.713,96,3578.08423,0,3578.08423,,,,2015-10-11 08:00,2015-10-22 16:00,,2015-08-27 08:00,2015-09-07 16:00,2015-08-27 08:00,2015-09-07 16:00,2015-08-27 08:00,2015-09-07 16:00,2015-10-11 08:00,2015-10-22 16:00,,PT_Normal,,,,,3kW3XZGb2kaJzpnJGiCsrg,OB4YW3riRgipBf45QVTmAw,,,N,0,0,,,2014-04-05 12:28,2014-04-05 13:21,admin,admin,
2169,141912,1749,36079,642,0,N,N,N,CP_Drtn,TT_Task,DT_FixedDUR2,TK_NotStart,BL3-MEP-EL-7F-2010,Power Points Wiring,,360,80,96,0,192,192,96,2906.213289,0,2906.213289,,,,2015-10-11 08:00,2015-10-22 16:00,,2015-08-27 08:00,2015-09-07 16:00,2015-08-27 08:00,2015-09-07 16:00,2015-08-27 08:00,2015-09-07 16:00,2015-10-11 08:00,2015-10-22 16:00,,PT_Normal,,,,,etsE+gt9O0+NdTLcckGp6g,N5XOgr7/S5Snm9pdA/wRvw,,,N,0,0,,,2014-04-05 12:28,2014-04-05 13:21,admin,admin,
2170,141913,1749,36079,642,0,N,N,N,CP_Drtn,TT_Task,DT_FixedDUR2,TK_NotStart,BL3-MEP-EL-7F-2020,Cable Tray and Trunking Installation,,360,48,112,0,336,336,112,9078.448617,0,9078.448617,,,,2015-10-09 08:00,2015-10-22 16:00,,2015-08-25 08:00,2015-09-07 16:00,2015-08-25 08:00,2015-09-07 16:00,2015-08-25 08:00,2015-09-07 16:00,2015-10-09 08:00,2015-10-22 16:00,,PT_Normal,,,,,d/udwbv450GrG085WuzjMQ,oCavLcVnR8afuOcA8C8GFg,,,N,0,0,,,2014-04-05 12:28,2014-04-05 13:21,admin,admin,
2171,141914,1749,36079,642,0,N,N,N,CP_Drtn,TT_Task,DT_FixedDUR2,TK_NotStart,BL3-MEP-EL-7F-2030,Emergency Light Wiring,,360,96,64,0,128,128,64,1210.028798,0,1210.028798,,,,2015-10-15 08:00,2015-10-22 16:00,,2015-08-31 08:00,2015-09-07 16:00,2015-08-31 08:00,2015-09-07 16:00,2015-08-31 08:00,2015-09-07 16:00,2015-10-15 08:00,2015-10-22 16:00,,PT_Normal,,,,,m35BRdbnW0uuiCuw6mXV6A,dtyofXBRTcCLT5kIwRXQug,,,N,0,0,,,2014-04-05 12:28,2014-04-05 13:21,admin,admin,
2172,141915,1749,36079,642,0,N,N,N,CP_Drtn,TT_Task,DT_FixedDUR2,TK_NotStart,BL3-MEP-EL-7F-2040,Fire Alarm System Wiring,,360,80,96,0,192,192,96,7123.009694,0,7123.009694,,,,2015-10-11 08:00,2015-10-22 16:00,,2015-08-27 08:00,2015-09-07 16:00,2015-08-27 08:00,2015-09-07 16:00,2015-08-27 08:00,2015-09-07 16:00,2015-10-11 08:00,2015-10-22 16:00,,PT_Normal,,,,,nPYeuF67bEyIsAgPPGuuDQ,HqJFUgvfRSiFp5gcwtVc5Q,,,N,0,0,,,2014-04-05 12:28,2014-04-05 13:21,admin,admin,
2173,141916,1749,36079,642,0,N,N,N,CP_Drtn,TT_Task,DT_FixedDUR2,TK_NotStart,BL3-MEP-EL-7F-2070,DB's Installation and Termination,4455,160,0,96,0,288,288,96,4982.925025,0,4982.925025,,,,2015-10-11 08:00,2015-10-22 16:00,,2015-09-21 08:00,2015-10-02 16:00,2015-09-21 08:00,2015-10-02 16:00,2015-09-21 08:00,2015-10-02 16:00,2015-10-11 08:00,2015-10-22 16:00,,PT_Normal,,,,,LCOwnZG20U6VHOoFbTYJ0A,Xs6wBOG2QX6qjNO+nGxDZA,,,N,0,0,,,2014-04-05 12:28,2014-04-05 13:21,admin,admin,
2174,141917,1749,36079,642,0,N,N,N,CP_Drtn,TT_Task,DT_FixedDUR2,TK_NotStart,BL3-MEP-EL-7F-2050,Low Current  System Wiring,4455,1008,328,112,0,244,244,112,38231.783306,0,38231.783306,,,,2015-12-31 08:00,2016-01-13 16:00,,2015-08-27 08:00,2015-09-09 16:00,2015-08-27 08:00,2015-09-09 16:00,2015-08-27 08:00,2015-09-09 16:00,2015-12-31 08:00,2016-01-13 16:00,,PT_Normal,,,,,3LE6NBdaXkarATcFFpY6Fg,QEtne4DiRFKgrhKvRKqO2g,,,N,0,0,,,2014-04-05 12:28,2014-04-05 13:21,admin,admin,
2175,141918,1749,36078,642,0,N,N,N,CP_Drtn,TT_Task,DT_FixedDUR2,TK_NotStart,BL3-MEP-EL-7F-3010,Lights Fitting Fixing,,384,40,112,0,244,244,112,7336.659378,0,7336.659378,,,,2015-12-08 08:00,2015-12-21 16:00,,2015-10-21 08:00,2015-11-03 16:00,2015-10-21 08:00,2015-11-03 16:00,2015-10-21 08:00,2015-11-03 16:00,2015-12-08 08:00,2015-12-21 16:00,,PT_Normal,,,,,Ile8cuH7DEO/hgRIlZiBWg,h5VIsnFhR/qAHS4ZPCetOA,,,N,0,0,,,2014-04-05 12:28,2014-04-05 13:21,admin,admin,
2176,141919,1749,36078,642,0,N,N,N,CP_Drtn,TT_Task,DT_FixedDUR2,TK_NotStart,BL3-MEP-EL-7F-3070,Sockets and Switches Fixing,,624,88,64,0,128,128,64,1174.957134,0,1174.957134,,,,2016-01-07 08:00,2016-01-14 16:00,,2015-10-21 08:00,2015-10-28 16:00,2015-10-21 08:00,2015-10-28 16:00,2015-10-21 08:00,2015-10-28 16:00,2016-01-07 08:00,2016-01-14 16:00,,PT_Normal,,,,,NuSMXFFNy0miuxNJKZ9LGw,M41cLjPgQxuIalkBy7rq6g,,,N,0,0,,,2014-04-05 12:28,2014-04-05 13:21,admin,admin,
2177,141920,1749,36078,642,0,N,N,N,CP_Drtn,TT_Task,DT_FixedDUR2,TK_NotStart,BL3-MEP-EL-7F-3020,Emergency Light Fixing,,664,88,64,0,128,128,64,5722.024623,0,5722.024623,,,,2016-01-12 08:00,2016-01-19 16:00,,2015-10-21 08:00,2015-10-28 16:00,2015-10-21 08:00,2015-10-28 16:00,2015-10-21 08:00,2015-10-28 16:00,2016-01-12 08:00,2016-01-19 16:00,,PT_Normal,,,,,fWL8/ioYREOW6N62N2zd8Q,df4Kisp3S+eE+WbI/hSdfw,,,N,0,0,,,2014-04-05 12:28,2014-04-05 13:21,admin,admin,
2178,141921,1749,36078,642,0,N,N,N,CP_Drtn,TT_Task,DT_FixedDUR2,TK_NotStart,BL3-MEP-EL-7F-3030,Fire Alarm System Detector Installation,,464,56,96,0,192,192,96,4046.378277,0,4046.378277,,,,2015-12-18 08:00,2015-12-29 16:00,,2015-10-21 08:00,2015-11-01 16:00,2015-10-21 08:00,2015-11-01 16:00,2015-10-21 08:00,2015-11-01 16:00,2015-12-18 08:00,2015-12-29 16:00,,PT_Normal,,,,,516UYdAAuUixCbQDK2yMMQ,8niKalJTRK27rrJjBt5LCA,,,N,0,0,,,2014-04-05 12:28,2014-04-05 13:21,admin,admin,
2179,141922,1749,36078,642,0,N,N,N,CP_Drtn,TT_Task,DT_FixedDUR2,TK_NotStart,BL3-MEP-EL-7F-3050,SMDB's  Termination and Final Connection,,696,104,48,0,192,192,48,2791.825001,0,2791.825001,,,,2016-01-16 08:00,2016-01-21 16:00,,2015-10-21 08:00,2015-10-26 16:00,2015-10-21 08:00,2015-10-26 16:00,2015-10-21 08:00,2015-10-26 16:00,2016-01-16 08:00,2016-01-21 16:00,,PT_Normal,,,,,sNXZlHM7UUmDGMWAkhV3jA,GU7F8B1hRIa8y7H8Fs6T2g,,,N,0,0,,,2014-04-05 12:28,2014-04-05 13:21,admin,admin,
2180,141923,1749,36079,642,0,N,N,N,CP_Drtn,TT_Task,DT_FixedDUR2,TK_NotStart,BL3-MEP-EL-7F-3000,Power Cable Puling,,480,32,112,0,168,168,112,6375.759893,0,6375.759893,,,,2015-12-02 08:00,2015-12-15 16:00,,2015-10-03 08:00,2015-10-16 16:00,2015-10-03 08:00,2015-10-16 16:00,2015-10-03 08:00,2015-10-16 16:00,2015-12-02 08:00,2015-12-15 16:00,,PT_Normal,,,,,1E8JKHeV1EOslnAz7t+36g,8scusCbmT4iY9rfv9PvWmQ,,,N,0,0,,,2014-04-05 12:28,2014-04-05 13:21,admin,admin,
2181,141924,1749,36078,642,0,N,N,N,CP_Drtn,TT_Task,DT_FixedDUR2,TK_NotStart,BL3-MEP-EL-7F-3040,Despature for Low Current  System Installation,4455,680,0,112,0,336,336,112,72752.164276,0,72752.164276,,,,2016-01-14 08:00,2016-01-27 16:00,,2015-10-21 08:00,2015-11-03 16:00,2015-10-21 08:00,2015-11-03 16:00,2015-10-21 08:00,2015-11-03 16:00,2016-01-14 08:00,2016-01-27 16:00,,PT_Normal,,,,,O/S6/NS+UkGB/WiUf0AQqw,3NE1zvs7QOmOkRT8kgXVdQ,,,N,0,0,,,2014-04-05 12:28,2014-04-05 13:21,admin,admin,
2182,141925,1749,36078,642,0,N,N,N,CP_Drtn,TT_Task,DT_FixedDUR2,TK_NotStart,BL3-MEP-EL-7F-3060,Low Current  System Outlet installation and Connection,4455,680,568,80,0,80,80,80,3870.787498,0,3870.787498,,,,2016-01-28 08:00,2016-02-06 16:00,,2015-11-04 08:00,2015-11-13 16:00,2015-11-04 08:00,2015-11-13 16:00,2015-11-04 08:00,2015-11-13 16:00,2016-01-28 08:00,2016-02-06 16:00,,PT_Normal,,,,,KzCV8k6sBEOAZJ23YyHMNw,8YLWc/wNSrSe96Oxz74mFA,,,N,0,0,,,2014-04-05 12:28,2014-04-05 13:21,admin,admin,
2183,141926,1749,36415,642,0,N,N,N,CP_Drtn,TT_Task,DT_FixedDUR2,TK_NotStart,BL3-MEP-AC-8F-1000,Supports and Hungers Fixing,,112,8,96,0,192,192,96,338.467259,0,338.467259,,,,2015-09-14 08:00,2015-09-25 16:00,,2015-08-31 08:00,2015-09-11 16:00,2015-08-31 08:00,2015-09-11 16:00,2015-08-31 08:00,2015-09-11 16:00,2015-09-14 08:00,2015-09-25 16:00,,PT_Normal,,,,,JIKnykrHiE6zk+OnJXPnrQ,hSP/vEZqQAW7oMVsk4XuJg,,,N,0,0,,,2014-04-05 12:28,2014-04-05 13:21,admin,admin,
2184,141927,1749,36575,642,0,N,N,N,CP_Drtn,TT_Task,DT_FixedDUR2,TK_NotStart,BL3-MEP-AC-8F-2000,Duct Installation and Insulation,4454,112,0,168,0,263,263,168,4350.939473,0,4350.939473,,,,2015-09-27 08:00,2015-10-17 16:00,,2015-09-13 08:00,2015-10-03 16:00,2015-09-13 08:00,2015-10-03 16:00,2015-09-13 08:00,2015-10-03 16:00,2015-09-27 08:00,2015-10-17 16:00,,PT_Normal,,,,,JBGXS8eE2k2rYc3hjlXJsA,GL8IHL1AQeClyLMrttP/Zg,,,N,0,0,,,2014-04-05 12:28,2014-04-05 13:21,admin,admin,
2185,141928,1749,36575,642,0,N,N,N,CP_Drtn,TT_Task,DT_FixedDUR2,TK_NotStart,BL3-MEP-AC-8F-2030,Duct Accessories Installation,4457,160,56,112,0,448,448,112,666.965527,0,666.965527,,,,2015-10-24 08:00,2015-11-06 16:00,,2015-10-04 08:00,2015-10-17 16:00,2015-10-04 08:00,2015-10-17 16:00,2015-10-04 08:00,2015-10-17 16:00,2015-10-24 08:00,2015-11-06 16:00,,PT_Normal,,,,,gtIvY4AIBEa2Qn3CoZqOzQ,hcjwrzV8SLOGe1calTa8qg,,,N,0,0,,,2014-04-05 12:28,2014-04-05 13:21,admin,admin,
2186,141929,1749,36575,642,0,N,N,N,CP_Drtn,TT_Task,DT_FixedDUR2,TK_NotStart,BL3-MEP-AC-8F-2010,FCU's Installation,4457,248,96,64,0,192,192,64,6000.055155,0,6000.055155,,,,2015-10-21 08:00,2015-10-28 16:00,,2015-09-20 08:00,2015-09-27 16:00,2015-09-20 08:00,2015-09-27 16:00,2015-09-20 08:00,2015-09-27 16:00,2015-10-21 08:00,2015-10-28 16:00,,PT_Normal,,,,,uFqfPIROu0qouMJeXiZGIw,iy40cftYQcC8wYm8DY0oNA,,,N,0,0,,,2014-04-05 12:28,2014-04-05 13:21,admin,admin,
2187,141930,1749,36575,642,0,N,N,N,CP_Drtn,TT_Task,DT_FixedDUR2,TK_NotStart,BL3-MEP-AC-8F-2020,Chilled Water Pipes and Fittings Installation,4457,104,0,168,0,840,840,168,5251.194852,0,5251.194852,,,,2015-09-26 08:00,2015-10-16 16:00,,2015-09-13 08:00,2015-10-03 16:00,2015-09-13 08:00,2015-10-03 16:00,2015-09-13 08:00,2015-10-03 16:00,2015-09-26 08:00,2015-10-16 16:00,,PT_Normal,,,,,Nu32W6Fsg0a4BtISdBuLLg,FyO8OOUhSZSZ8iJXIUlZzw,,,N,0,0,,,2014-04-05 12:28,2014-04-05 13:21,admin,admin,
2188,141931,1749,36575,642,0,N,N,N,CP_Drtn,TT_Task,DT_FixedDUR2,TK_NotStart,BL3-MEP-AC-8F-2040,Chilled Water Pipes Pressure Test,4457,152,0,48,0,96,96,48,587.116683,0,587.116683,,,,2015-10-23 08:00,2015-10-28 16:00,,2015-10-04 08:00,2015-10-09 16:00,2015-10-04 08:00,2015-10-09 16:00,2015-10-04 08:00,2015-10-09 16:00,2015-10-23 08:00,2015-10-28 16:00,,PT_Normal,,,,,X+yFFRCTaE+bwldM5AYefg,dcE9RAYDQYGs2sgeG5S0kQ,,,N,0,0,,,2014-04-05 12:28,2014-04-05 13:21,admin,admin,
2189,141932,1749,36575,642,0,N,N,N,CP_Drtn,TT_Task,DT_FixedDUR2,TK_NotStart,BL3-MEP-AC-8F-2050,Chilled Water Pipes Insulation,4457,720,72,96,0,384,384,96,1670.208495,0,1670.208495,,,,2016-01-08 08:00,2016-01-19 16:00,,2015-10-10 08:00,2015-10-21 16:00,2015-10-10 08:00,2015-10-21 16:00,2015-10-10 08:00,2015-10-21 16:00,2016-01-08 08:00,2016-01-19 16:00,,PT_Normal,,,,,FVp00sws6E6fiaCZArtaQg,WE0AQ/ZgTAOPHIDxRJFJWg,,,N,0,0,,,2014-04-05 12:28,2014-04-05 13:21,admin,admin,
2190,141933,1749,36575,642,0,N,N,N,CP_Drtn,TT_Task,DT_FixedDUR2,TK_NotStart,BL3-MEP-AC-8F-2060,Valve Package Installation,4457,152,0,48,0,96,96,48,2386.490429,0,2386.490429,,,,2015-10-29 08:00,2015-11-03 16:00,,2015-10-10 08:00,2015-10-15 16:00,2015-10-10 08:00,2015-10-15 16:00,2015-10-10 08:00,2015-10-15 16:00,2015-10-29 08:00,2015-11-03 16:00,,PT_Normal,,,,,fncForkdyUmP/YB9mvE3/A,1Wl+wK1PTG2ku5jjj7v6zg,,,N,0,0,,,2014-04-05 12:28,2014-04-05 13:21,admin,admin,
2191,141934,1749,36575,642,0,N,N,N,CP_Drtn,TT_Task,DT_FixedDUR2,TK_NotStart,BL3-MEP-AC-8F-2070,FCU's Drain Pipes Installation,4457,152,120,24,0,48,48,24,519.927167,0,519.927167,,,,2015-11-04 08:00,2015-11-06 16:00,,2015-10-16 08:00,2015-10-18 16:00,2015-10-16 08:00,2015-10-18 16:00,2015-10-16 08:00,2015-10-18 16:00,2015-11-04 08:00,2015-11-06 16:00,,PT_Normal,,,,,ef5OeGJBoUKQC6kkhPbz1A,BNnt5Qd5R3q8rZYP1Kmb7w,,,N,0,0,,,2014-04-05 12:28,2014-04-05 13:21,admin,admin,
2192,141935,1749,36576,642,0,N,N,N,CP_Drtn,TT_Task,DT_FixedDUR2,TK_NotStart,BL3-MEP-AC-8F-3000,Grills and Diffusers Fixing,,480,40,96,0,384,384,96,11550.608192,0,11550.608192,,,,2016-01-08 08:00,2016-01-19 16:00,,2015-11-09 08:00,2015-11-20 16:00,2015-11-09 08:00,2015-11-20 16:00,2015-11-09 08:00,2015-11-20 16:00,2016-01-08 08:00,2016-01-19 16:00,,PT_Normal,,,,,/OoUkeXT30OTGhrexn5GxQ,lNZ9eBliTaq5WuicSus+GQ,,,N,0,0,,,2014-04-05 12:28,2014-04-05 13:21,admin,admin,
2193,141936,1749,36370,642,0,N,N,N,CP_Drtn,TT_Task,DT_FixedDUR2,TK_NotStart,BL3-MEP-PL-8F-1000,Low Level Water Supply Pipes Installation,,104,8,96,0,42,42,96,725.216846,0,725.216846,,,,2015-09-13 08:00,2015-09-24 16:00,,2015-08-31 08:00,2015-09-11 16:00,2015-08-31 08:00,2015-09-11 16:00,2015-08-31 08:00,2015-09-11 16:00,2015-09-13 08:00,2015-09-24 16:00,,PT_Normal,,,,,+TXxgyX/h0ydydEvYoz6yw,mMd0fWGURMyCojxhPkvDAA,,,N,0,0,,,2014-04-05 12:28,2014-04-05 13:21,admin,admin,
2194,141937,1749,36370,642,0,N,N,N,CP_Drtn,TT_Task,DT_FixedDUR2,TK_NotStart,BL3-MEP-PL-8F-1010,Low Level Drainage Pipes Installation,,104,8,96,0,12.67,12.67,96,2291.461713,0,2291.461713,,,,2015-09-13 08:00,2015-09-24 16:00,,2015-08-31 08:00,2015-09-11 16:00,2015-08-31 08:00,2015-09-11 16:00,2015-08-31 08:00,2015-09-11 16:00,2015-09-13 08:00,2015-09-24 16:00,,PT_Normal,,,,,ju7Sjp1oFU+Ln0HBXP1U1w,V2cC+RhcQ72HTPCpK2Xydg,,,N,0,0,,,2014-04-05 12:28,2014-04-05 13:21,admin,admin,
2195,141938,1749,36370,642,0,N,N,N,CP_Drtn,TT_Task,DT_FixedDUR2,TK_NotStart,BL3-MEP-PL-8F-1020,Supports  installation for High level Pipes,,184,8,96,0,16.352,16.352,96,831.682549,0,831.682549,,,,2015-09-23 08:00,2015-10-04 16:00,,2015-08-31 08:00,2015-09-11 16:00,2015-08-31 08:00,2015-09-11 16:00,2015-08-31 08:00,2015-09-11 16:00,2015-09-23 08:00,2015-10-04 16:00,,PT_Normal,,,,,kj7GbH5qMUubDYbzgdd7Wg,ZAQAdINNRlivZeEjqAl+Aw,,,N,0,0,,,2014-04-05 12:28,2014-04-05 13:21,admin,admin,
2196,141939,1749,36471,642,0,N,N,N,CP_Drtn,TT_Task,DT_FixedDUR2,TK_NotStart,BL3-MEP-PL-8F-2030,Floor Drain Installation,,560,88,48,0,6,6,48,554.143324,0,554.143324,,,,2016-01-18 08:00,2016-01-23 16:00,,2015-11-09 08:00,2015-11-14 16:00,2015-11-09 08:00,2015-11-14 16:00,2015-11-09 08:00,2015-11-14 16:00,2016-01-18 08:00,2016-01-23 16:00,,PT_Normal,,,,,ic1RykiCckOWfOXu0AeVeQ,U9w1PdcfQ96aZpssTlJx+A,,,N,0,0,,,2014-04-05 12:28,2014-04-05 13:21,admin,admin,
2197,141940,1749,36471,642,0,N,N,N,CP_Drtn,TT_Task,DT_FixedDUR2,TK_NotStart,BL3-MEP-PL-8F-2000,High Level Water Supply Pipes and Fittings Installation,,176,0,168,0,150.02,150.02,168,1329.597866,0,1329.597866,,,,2015-10-05 08:00,2015-10-25 16:00,,2015-09-13 08:00,2015-10-03 16:00,2015-09-13 08:00,2015-10-03 16:00,2015-09-13 08:00,2015-10-03 16:00,2015-10-05 08:00,2015-10-25 16:00,,PT_Normal,,,,,t6Vb5wc0hEqxRCz/epcNiA,AIGo+P0HQm+IkwFb8Q0GBQ,,,N,0,0,,,2014-04-05 12:28,2014-04-05 13:21,admin,admin,
2198,141941,1749,36471,642,0,N,N,N,CP_Drtn,TT_Task,DT_FixedDUR2,TK_NotStart,BL3-MEP-PL-8F-2010,High Level Drainage Pipes Installation,,176,0,168,0,244.38,244.38,168,6583.525267,0,6583.525267,,,,2015-10-05 08:00,2015-10-25 16:00,,2015-09-13 08:00,2015-10-03 16:00,2015-09-13 08:00,2015-10-03 16:00,2015-09-13 08:00,2015-10-03 16:00,2015-10-05 08:00,2015-10-25 16:00,,PT_Normal,,,,,IzTOb769YUq8Wy0wXPOyrw,dvH9GBc6SAS5vWegKOG08Q,,,N,0,0,,,2014-04-05 12:28,2014-04-05 13:21,admin,admin,
2199,141942,1749,36471,642,0,N,N,N,CP_Drtn,TT_Task,DT_FixedDUR2,TK_NotStart,BL3-MEP-PL-8F-2020,Water Supply Pipes Pressure Test,4456,224,120,48,0,48,48,48,151.744312,0,151.744312,,,,2015-11-01 08:00,2015-11-06 16:00,,2015-10-04 08:00,2015-10-09 16:00,2015-10-04 08:00,2015-10-09 16:00,2015-10-04 08:00,2015-10-09 16:00,2015-11-01 08:00,2015-11-06 16:00,,PT_Normal,,,,,srKoLW6luU63AbD9kBSfZg,e/uTlRN4TOK02XayFOY8Cg,,,N,0,0,,,2014-04-05 12:28,2014-04-05 13:21,admin,admin,
2200,141943,1749,36471,642,0,N,N,N,CP_Drtn,TT_Task,DT_FixedDUR2,TK_NotStart,BL3-MEP-PL-8F-2040,Drainage Pipes Gravity Test,,224,120,48,0,48,48,48,826.240719,0,826.240719,,,,2015-11-01 08:00,2015-11-06 16:00,,2015-10-04 08:00,2015-10-09 16:00,2015-10-04 08:00,2015-10-09 16:00,2015-10-04 08:00,2015-10-09 16:00,2015-11-01 08:00,2015-11-06 16:00,,PT_Normal,,,,,Pl6u2vHnsUWOApMHQkOVxw,siVcN/2JSU6WtdCoyB/WXQ,,,N,0,0,,,2014-04-05 12:28,2014-04-05 13:21,admin,admin,
2201,141944,1749,36328,642,0,N,N,N,CP_Drtn,TT_Task,DT_FixedDUR2,TK_NotStart,BL3-MEP-PL-8F-3000,Sanitary Ware Installation Including Connection,,40,0,112,0,383.862,383.862,112,4453.516455,0,4453.516455,,,,2015-12-14 08:00,2015-12-27 16:00,,2015-12-09 08:00,2015-12-22 16:00,2015-12-09 08:00,2015-12-22 16:00,2015-12-09 08:00,2015-12-22 16:00,2015-12-14 08:00,2015-12-27 16:00,,PT_Normal,,,,,go7w6d770EiHiXnVZltsMA,1jHJ4JjtQyKFjInDEA8dRw,,,N,0,0,,,2014-04-05 12:28,2014-04-05 13:21,admin,admin,
2202,141945,1749,36328,642,0,N,N,N,CP_Drtn,TT_Task,DT_FixedDUR2,TK_NotStart,BL3-MEP-PL-8F-3010,Sanitary Ware Accessories Installation,,168,88,48,0,36.45,36.45,48,166.215378,0,166.215378,,,,2016-01-13 08:00,2016-01-18 16:00,,2015-12-23 08:00,2015-12-28 16:00,2015-12-23 08:00,2015-12-28 16:00,2015-12-23 08:00,2015-12-28 16:00,2016-01-13 08:00,2016-01-18 16:00,,PT_Normal,,,,,JaYKev6SV06vHmGOAVo9Bg,ABYMQRrlTTe5RqGu6mb8iw,,,N,0,0,,,2014-04-05 12:28,2014-04-05 13:21,admin,admin,
2203,141946,1749,36341,642,0,N,N,N,CP_Drtn,TT_Task,DT_FixedDUR2,TK_NotStart,BL3-MEP-FF-8F-3000,Fire Extinguisher Installation,,80,32,16,0,8,8,16,1076.993507,0,1076.993507,,,,2016-02-04 08:00,2016-02-05 16:00,,2016-01-25 08:00,2016-01-26 16:00,2016-01-25 08:00,2016-01-26 16:00,2016-01-25 08:00,2016-01-26 16:00,2016-02-04 08:00,2016-02-05 16:00,,PT_Normal,,,,,n/XRBHKrCE+0OBwugv1Aqw,X7nYF9K5Qkiyug94uZmHAw,,,N,0,0,,,2014-04-05 12:28,2014-04-05 13:21,admin,admin,
2204,141947,1749,36341,642,0,N,N,N,CP_Drtn,TT_Task,DT_FixedDUR2,TK_NotStart,BL3-MEP-FF-8F-3010,Hose reel Cabinet Installation and Connection,,48,0,48,0,192,192,48,1336.852298,0,1336.852298,,,,2016-01-30 08:00,2016-02-04 16:00,,2016-01-24 08:00,2016-01-29 16:00,2016-01-24 08:00,2016-01-29 16:00,2016-01-24 08:00,2016-01-29 16:00,2016-01-30 08:00,2016-02-04 16:00,,PT_Normal,,,,,v6w4N+68QUKQYCK7K66S3A,f+uAmSE9Tie3n0JDBkMDRA,,,N,0,0,,,2014-04-05 12:28,2014-04-05 13:21,admin,admin,
2205,141948,1749,36145,642,0,N,N,N,CP_Drtn,TT_Task,DT_FixedDUR2,TK_NotStart,BL3-MEP-EL-8F-1000,PVC Back Boxes and Conduits  Fixing in Wall,,56,0,176,0,384,384,176,3329.67233,0,3329.67233,,,,2015-09-03 08:00,2015-09-24 16:00,,2015-08-27 08:00,2015-09-17 16:00,2015-08-27 08:00,2015-09-17 16:00,2015-08-27 08:00,2015-09-17 16:00,2015-09-03 08:00,2015-09-24 16:00,,PT_Normal,,,,,W8B/WIFMv0Ct7N77Rx/8Hw,C31C1ufEQPyhoBBRNEF6iQ,,,N,0,0,,,2014-04-05 12:28,2014-04-05 13:21,admin,admin,
2206,141949,1749,36145,642,0,N,N,N,CP_Drtn,TT_Task,DT_FixedDUR2,TK_NotStart,BL3-MEP-EL-8F-1010,DB's Inclosure Fixing,4455,104,72,48,0,96,96,48,2136.399392,0,2136.399392,,,,2015-09-19 08:00,2015-09-24 16:00,,2015-09-06 08:00,2015-09-11 16:00,2015-09-06 08:00,2015-09-11 16:00,2015-09-06 08:00,2015-09-11 16:00,2015-09-19 08:00,2015-09-24 16:00,,PT_Normal,,,,,U9kloR6mrkmPv9absNLC7A,0fZKqn+ES0Ok15vgiUTxlA,,,N,0,0,,,2014-04-05 12:28,2014-04-05 13:21,admin,admin,
2207,141950,1749,36146,642,0,N,N,N,CP_Drtn,TT_Task,DT_FixedDUR2,TK_NotStart,BL3-MEP-EL-8F-2060,SMDB's  Installation,,784,120,48,0,45,45,48,4202.598932,0,4202.598932,,,,2016-01-16 08:00,2016-01-21 16:00,,2015-10-10 08:00,2015-10-15 16:00,2015-10-10 08:00,2015-10-15 16:00,2015-10-10 08:00,2015-10-15 16:00,2016-01-16 08:00,2016-01-21 16:00,,PT_Normal,,,,,f/eaxCtthkSZqPIok+Sbag,gj7BqSODTVucw3HGzjzZdg,,,N,0,0,,,2014-04-05 12:28,2014-04-05 13:21,admin,admin,
2208,141951,1749,36146,642,0,N,N,N,CP_Drtn,TT_Task,DT_FixedDUR2,TK_NotStart,BL3-MEP-EL-8F-2000,Lighting  Wiring,,304,64,96,0,241.713,241.713,96,3578.08423,0,3578.08423,,,,2015-10-26 08:00,2015-11-06 16:00,,2015-09-18 08:00,2015-09-29 16:00,2015-09-18 08:00,2015-09-29 16:00,2015-09-18 08:00,2015-09-29 16:00,2015-10-26 08:00,2015-11-06 16:00,,PT_Normal,,,,,hvBpQX42sUiiYmg75wQGRA,jKDUYPziQTGXbaDUdDyJxw,,,N,0,0,,,2014-04-05 12:28,2014-04-05 13:21,admin,admin,
2209,141952,1749,36146,642,0,N,N,N,CP_Drtn,TT_Task,DT_FixedDUR2,TK_NotStart,BL3-MEP-EL-8F-2010,Power Points Wiring,,304,64,96,0,192,192,96,2906.213289,0,2906.213289,,,,2015-10-26 08:00,2015-11-06 16:00,,2015-09-18 08:00,2015-09-29 16:00,2015-09-18 08:00,2015-09-29 16:00,2015-09-18 08:00,2015-09-29 16:00,2015-10-26 08:00,2015-11-06 16:00,,PT_Normal,,,,,sSemZcfIl0CeIzd4WTyWvw,YHgr+s3QQR2Usdi97/YSVQ,,,N,0,0,,,2014-04-05 12:28,2014-04-05 13:21,admin,admin,
2210,141953,1749,36146,642,0,N,N,N,CP_Drtn,TT_Task,DT_FixedDUR2,TK_NotStart,BL3-MEP-EL-8F-2020,Cable Tray and Trunking Installation,,320,64,112,0,336,336,112,9078.448617,0,9078.448617,,,,2015-10-24 08:00,2015-11-06 16:00,,2015-09-14 08:00,2015-09-27 16:00,2015-09-14 08:00,2015-09-27 16:00,2015-09-14 08:00,2015-09-27 16:00,2015-10-24 08:00,2015-11-06 16:00,,PT_Normal,,,,,3LVAEvHjoUWAk7HadFSQOA,ngJleJlGQIeQEZklp9mwDg,,,N,0,0,,,2014-04-05 12:28,2014-04-05 13:21,admin,admin,
2211,141954,1749,36146,642,0,N,N,N,CP_Drtn,TT_Task,DT_FixedDUR2,TK_NotStart,BL3-MEP-EL-8F-2030,Emergency Light Wiring,,320,112,64,0,128,128,64,1210.028798,0,1210.028798,,,,2015-10-30 08:00,2015-11-06 16:00,,2015-09-20 08:00,2015-09-27 16:00,2015-09-20 08:00,2015-09-27 16:00,2015-09-20 08:00,2015-09-27 16:00,2015-10-30 08:00,2015-11-06 16:00,,PT_Normal,,,,,KSNcgS4uj0imST0odmyVuw,/IfkQjecSvCRmn3rVyUISA,,,N,0,0,,,2014-04-05 12:28,2014-04-05 13:21,admin,admin,
2212,141955,1749,36146,642,0,N,N,N,CP_Drtn,TT_Task,DT_FixedDUR2,TK_NotStart,BL3-MEP-EL-8F-2040,Fire Alarm System Wiring,,304,64,96,0,192,192,96,7123.009694,0,7123.009694,,,,2015-10-26 08:00,2015-11-06 16:00,,2015-09-18 08:00,2015-09-29 16:00,2015-09-18 08:00,2015-09-29 16:00,2015-09-18 08:00,2015-09-29 16:00,2015-10-26 08:00,2015-11-06 16:00,,PT_Normal,,,,,gId8p8gyQ0KS3wi1ePWIvg,ga8LKetkSgmKxZo2FP3r1A,,,N,0,0,,,2014-04-05 12:28,2014-04-05 13:21,admin,admin,
2213,141956,1749,36146,642,0,N,N,N,CP_Drtn,TT_Task,DT_FixedDUR2,TK_NotStart,BL3-MEP-EL-8F-2070,DB's Installation and Termination,4455,128,0,96,0,288,288,96,4982.925025,0,4982.925025,,,,2015-10-26 08:00,2015-11-06 16:00,,2015-10-10 08:00,2015-10-21 16:00,2015-10-10 08:00,2015-10-21 16:00,2015-10-10 08:00,2015-10-21 16:00,2015-10-26 08:00,2015-11-06 16:00,,PT_Normal,,,,,e6SC4uhadEi3Svgn7KJv2A,8QpVn59nQYSmFULlKpOwww,,,N,0,0,,,2014-04-05 12:28,2014-04-05 13:21,admin,admin,
2214,141957,1749,36146,642,0,N,N,N,CP_Drtn,TT_Task,DT_FixedDUR2,TK_NotStart,BL3-MEP-EL-8F-2050,Low Current  System Wiring,4455,848,304,112,0,244,244,112,38231.783306,0,38231.783306,,,,2016-01-02 08:00,2016-01-15 16:00,,2015-09-18 08:00,2015-10-01 16:00,2015-09-18 08:00,2015-10-01 16:00,2015-09-18 08:00,2015-10-01 16:00,2016-01-02 08:00,2016-01-15 16:00,,PT_Normal,,,,,x1rtaikUg0yXJklMFmiRQw,ZN/Sr0qZRN2tXjAFBmoejQ,,,N,0,0,,,2014-04-05 12:28,2014-04-05 13:21,admin,admin,
2215,141958,1749,36102,642,0,N,N,N,CP_Drtn,TT_Task,DT_FixedDUR2,TK_NotStart,BL3-MEP-EL-8F-3020,Lights Fitting Fixing,,344,24,112,0,244,244,112,7336.659378,0,7336.659378,,,,2015-12-22 08:00,2016-01-04 16:00,,2015-11-09 08:00,2015-11-22 16:00,2015-11-09 08:00,2015-11-22 16:00,2015-11-09 08:00,2015-11-22 16:00,2015-12-22 08:00,2016-01-04 16:00,,PT_Normal,,,,,Ic7VxFXla025JVk4AWFjCg,EPmyMnS6TxyT1b+IYM2BVw,,,N,0,0,,,2014-04-05 12:28,2014-04-05 13:21,admin,admin,
2216,141959,1749,36102,642,0,N,N,N,CP_Drtn,TT_Task,DT_FixedDUR2,TK_NotStart,BL3-MEP-EL-8F-3070,Sockets and Switches Fixing,,536,72,64,0,128,128,64,1174.957134,0,1174.957134,,,,2016-01-15 08:00,2016-01-22 16:00,,2015-11-09 08:00,2015-11-16 16:00,2015-11-09 08:00,2015-11-16 16:00,2015-11-09 08:00,2015-11-16 16:00,2016-01-15 08:00,2016-01-22 16:00,,PT_Normal,,,,,NLXloxe9pEi/nIzVgLkvWg,V+FBhfy3QeKEjhB1Vja1hw,,,N,0,0,,,2014-04-05 12:28,2014-04-05 13:21,admin,admin,
2217,141960,1749,36102,642,0,N,N,N,CP_Drtn,TT_Task,DT_FixedDUR2,TK_NotStart,BL3-MEP-EL-8F-3030,Emergency Light Fixing,,576,72,64,0,128,128,64,5722.024623,0,5722.024623,,,,2016-01-20 08:00,2016-01-27 16:00,,2015-11-09 08:00,2015-11-16 16:00,2015-11-09 08:00,2015-11-16 16:00,2015-11-09 08:00,2015-11-16 16:00,2016-01-20 08:00,2016-01-27 16:00,,PT_Normal,,,,,8fkLLWiryEiK6d2hr4ym1Q,QnD9L4HeRR2+p6mWVhKxFA,,,N,0,0,,,2014-04-05 12:28,2014-04-05 13:21,admin,admin,
2218,141961,1749,36102,642,0,N,N,N,CP_Drtn,TT_Task,DT_FixedDUR2,TK_NotStart,BL3-MEP-EL-8F-3040,Fire Alarm System Detector Installation,,408,40,96,0,192,192,96,4046.378277,0,4046.378277,,,,2015-12-30 08:00,2016-01-10 16:00,,2015-11-09 08:00,2015-11-20 16:00,2015-11-09 08:00,2015-11-20 16:00,2015-11-09 08:00,2015-11-20 16:00,2015-12-30 08:00,2016-01-10 16:00,,PT_Normal,,,,,ZBPDVHFAI0+bKIT//5G/uQ,aExDW4xVT8CWcVmyfjbRlg,,,N,0,0,,,2014-04-05 12:28,2014-04-05 13:21,admin,admin,
2219,141962,1749,36102,642,0,N,N,N,CP_Drtn,TT_Task,DT_FixedDUR2,TK_NotStart,BL3-MEP-EL-8F-3010,SMDB's  Termination and Final Connection,,592,88,48,0,192,192,48,2791.825001,0,2791.825001,,,,2016-01-22 08:00,2016-01-27 16:00,,2015-11-09 08:00,2015-11-14 16:00,2015-11-09 08:00,2015-11-14 16:00,2015-11-09 08:00,2015-11-14 16:00,2016-01-22 08:00,2016-01-27 16:00,,PT_Normal,,,,,JT4hBbdBlUORXyDhgPE6KQ,0pqp7p87Tay6N5+JJ0OGPQ,,,N,0,0,,,2014-04-05 12:28,2014-04-05 13:21,admin,admin,
2220,141963,1749,36146,642,0,N,N,N,CP_Drtn,TT_Task,DT_FixedDUR2,TK_NotStart,BL3-MEP-EL-8F-3000,Power Cable Puling,,440,32,112,0,168,168,112,6375.759893,0,6375.759893,,,,2015-12-16 08:00,2015-12-29 16:00,,2015-10-22 08:00,2015-11-04 16:00,2015-10-22 08:00,2015-11-04 16:00,2015-10-22 08:00,2015-11-04 16:00,2015-12-16 08:00,2015-12-29 16:00,,PT_Normal,,,,,YESJ5OO3iUCJT1LyS5ncww,HcHCq6GwSVSEZiVhwFrJIw,,,N,0,0,,,2014-04-05 12:28,2014-04-05 13:21,admin,admin,
2221,141964,1749,36102,642,0,N,N,N,CP_Drtn,TT_Task,DT_FixedDUR2,TK_NotStart,BL3-MEP-EL-8F-3050,Despature for Low Current  System Installation,4455,544,0,112,0,336,336,112,72752.164276,0,72752.164276,,,,2016-01-16 08:00,2016-01-29 16:00,,2015-11-09 08:00,2015-11-22 16:00,2015-11-09 08:00,2015-11-22 16:00,2015-11-09 08:00,2015-11-22 16:00,2016-01-16 08:00,2016-01-29 16:00,,PT_Normal,,,,,LL29sgTubk+5MCmKyuLAUw,VBJ/g/iqSda9uUcKmnhuNw,,,N,0,0,,,2014-04-05 12:28,2014-04-05 13:21,admin,admin,
2222,141965,1749,36102,642,0,N,N,N,CP_Drtn,TT_Task,DT_FixedDUR2,TK_NotStart,BL3-MEP-EL-8F-3060,Low Current  System Outlet installation and Connection,4455,544,464,80,0,80,80,80,3870.787498,0,3870.787498,,,,2016-01-30 08:00,2016-02-08 16:00,,2015-11-23 08:00,2015-12-02 16:00,2015-11-23 08:00,2015-12-02 16:00,2015-11-23 08:00,2015-12-02 16:00,2016-01-30 08:00,2016-02-08 16:00,,PT_Normal,,,,,JG5Ev3WqBE2sGAwopTMQnQ,mdTBj4G8Q72yNPyjdb+69A,,,N,0,0,,,2014-04-05 12:28,2014-04-05 13:21,admin,admin,
2223,141966,1749,36322,642,0,N,N,N,CP_Drtn,TT_Task,DT_FixedDUR2,TK_NotStart,BL3-MEP-AC-9F-1000,Supports and Hungers Fixing,,104,0,96,0,192,192,96,338.467259,0,338.467259,,,,2015-10-05 08:00,2015-10-16 16:00,,2015-09-22 08:00,2015-10-03 16:00,2015-09-22 08:00,2015-10-03 16:00,2015-09-22 08:00,2015-10-03 16:00,2015-10-05 08:00,2015-10-16 16:00,,PT_Normal,,,,,0PrLubGCAUap5LL/90iGXA,0LSZMr32RIyFJlsMDBCrGg,,,N,0,0,,,2014-04-05 12:28,2014-04-05 13:21,admin,admin,
2224,141967,1749,36512,642,0,N,N,N,CP_Drtn,TT_Task,DT_FixedDUR2,TK_NotStart,BL3-MEP-AC-9F-2010,Duct Installation and Insulation,4454,112,0,168,0,263,263,168,4350.939473,0,4350.939473,,,,2015-10-18 08:00,2015-11-07 16:00,,2015-10-04 08:00,2015-10-24 16:00,2015-10-04 08:00,2015-10-24 16:00,2015-10-04 08:00,2015-10-24 16:00,2015-10-18 08:00,2015-11-07 16:00,,PT_Normal,,,,,ldU7nWnegkqfcKGphclSpw,F5DgSBCIToWyj/cXThUW+A,,,N,0,0,,,2014-04-05 12:28,2014-04-05 13:21,admin,admin,
2225,141968,1749,36512,642,0,N,N,N,CP_Drtn,TT_Task,DT_FixedDUR2,TK_NotStart,BL3-MEP-AC-9F-2030,Duct Accessories Installation,4457,112,56,112,0,448,448,112,666.965527,0,666.965527,,,,2015-11-08 08:00,2015-11-21 16:00,,2015-10-25 08:00,2015-11-07 16:00,2015-10-25 08:00,2015-11-07 16:00,2015-10-25 08:00,2015-11-07 16:00,2015-11-08 08:00,2015-11-21 16:00,,PT_Normal,,,,,ZY17KexMfUuo3XxdDi12ag,9aHWujRVRlq5ScXdeh3alQ,,,N,0,0,,,2014-04-05 12:28,2014-04-05 13:21,admin,admin,
2226,141969,1749,36512,642,0,N,N,N,CP_Drtn,TT_Task,DT_FixedDUR2,TK_NotStart,BL3-MEP-AC-9F-2000,FCU's Installation,4457,192,40,64,0,192,192,64,6000.055155,0,6000.055155,,,,2015-11-05 08:00,2015-11-12 16:00,,2015-10-12 08:00,2015-10-19 16:00,2015-10-12 08:00,2015-10-19 16:00,2015-10-12 08:00,2015-10-19 16:00,2015-11-05 08:00,2015-11-12 16:00,,PT_Normal,,,,,9EjeoWlGZEiYO8B7vjduhA,2wkXN54qSxqcxNHT2h3rGw,,,N,0,0,,,2014-04-05 12:28,2014-04-05 13:21,admin,admin,
2227,141970,1749,36512,642,0,N,N,N,CP_Drtn,TT_Task,DT_FixedDUR2,TK_NotStart,BL3-MEP-AC-9F-2020,Chilled Water Pipes and Fittings Installation,4457,104,0,168,0,840,840,168,5251.194852,0,5251.194852,,,,2015-10-17 08:00,2015-11-06 16:00,,2015-10-04 08:00,2015-10-24 16:00,2015-10-04 08:00,2015-10-24 16:00,2015-10-04 08:00,2015-10-24 16:00,2015-10-17 08:00,2015-11-06 16:00,,PT_Normal,,,,,FYzjbq8/HkqS0SM38e0hsg,Qv7eVK8/SpCgyjfKDEHTbw,,,N,0,0,,,2014-04-05 12:28,2014-04-05 13:21,admin,admin,
2228,141971,1749,36512,642,0,N,N,N,CP_Drtn,TT_Task,DT_FixedDUR2,TK_NotStart,BL3-MEP-AC-9F-2040,Chilled Water Pipes Pressure Test,4457,104,0,48,0,96,96,48,587.116683,0,587.116683,,,,2015-11-07 08:00,2015-11-12 16:00,,2015-10-25 08:00,2015-10-30 16:00,2015-10-25 08:00,2015-10-30 16:00,2015-10-25 08:00,2015-10-30 16:00,2015-11-07 08:00,2015-11-12 16:00,,PT_Normal,,,,,kOvoXaM/UEyjng4yiwnqUw,AQYbUd26SOuSHgn3SO0DbA,,,N,0,0,,,2014-04-05 12:28,2014-04-05 13:21,admin,admin,
2229,141972,1749,36512,642,0,N,N,N,CP_Drtn,TT_Task,DT_FixedDUR2,TK_NotStart,BL3-MEP-AC-9F-2050,Chilled Water Pipes Insulation,4457,648,72,96,0,384,384,96,1670.208495,0,1670.208495,,,,2016-01-20 08:00,2016-01-31 16:00,,2015-10-31 08:00,2015-11-11 16:00,2015-10-31 08:00,2015-11-11 16:00,2015-10-31 08:00,2015-11-11 16:00,2016-01-20 08:00,2016-01-31 16:00,,PT_Normal,,,,,xImZ8RM6W0SCmmcnVQQ1Uw,njTk9G6VT+CKX4oihY9vUA,,,N,0,0,,,2014-04-05 12:28,2014-04-05 13:21,admin,admin,
2230,141973,1749,36512,642,0,N,N,N,CP_Drtn,TT_Task,DT_FixedDUR2,TK_NotStart,BL3-MEP-AC-9F-2060,Valve Package Installation,4457,104,0,48,0,96,96,48,2386.490429,0,2386.490429,,,,2015-11-13 08:00,2015-11-18 16:00,,2015-10-31 08:00,2015-11-05 16:00,2015-10-31 08:00,2015-11-05 16:00,2015-10-31 08:00,2015-11-05 16:00,2015-11-13 08:00,2015-11-18 16:00,,PT_Normal,,,,,OdKbyIFQQky/2K2B6wIxKA,hOk1QMSpQEuVEahByJFhxA,,,N,0,0,,,2014-04-05 12:28,2014-04-05 13:21,admin,admin,
2231,141974,1749,36512,642,0,N,N,N,CP_Drtn,TT_Task,DT_FixedDUR2,TK_NotStart,BL3-MEP-AC-9F-2070,FCU's Drain Pipes Installation,4457,104,88,24,0,48,48,24,519.927167,0,519.927167,,,,2015-11-19 08:00,2015-11-21 16:00,,2015-11-06 08:00,2015-11-08 16:00,2015-11-06 08:00,2015-11-08 16:00,2015-11-06 08:00,2015-11-08 16:00,2015-11-19 08:00,2015-11-21 16:00,,PT_Normal,,,,,0y5+//hD/kqt4Cwo6wExVQ,/rzMute7RY2NYAlG/Uvz9A,,,N,0,0,,,2014-04-05 12:28,2014-04-05 13:21,admin,admin,
2232,141975,1749,36402,642,0,N,N,N,CP_Drtn,TT_Task,DT_FixedDUR2,TK_NotStart,BL3-MEP-AC-9F-3000,Grills and Diffusers Fixing,,440,120,96,0,384,384,96,11550.608192,0,11550.608192,,,,2016-01-20 08:00,2016-01-31 16:00,,2015-11-26 08:00,2015-12-07 16:00,2015-11-26 08:00,2015-12-07 16:00,2015-11-26 08:00,2015-12-07 16:00,2016-01-20 08:00,2016-01-31 16:00,,PT_Normal,,,,,MEZe5eQMtUe3isQ1RljmSA,L/4SkDFGTi+PZot6CDg3ww,,,N,0,0,,,2014-04-05 12:28,2014-04-05 13:21,admin,admin,
2233,141976,1749,36505,642,0,N,N,N,CP_Drtn,TT_Task,DT_FixedDUR2,TK_NotStart,BL3-MEP-PL-9F-1000,Low Level Water Supply Pipes Installation,,88,0,96,0,42,42,96,725.216846,0,725.216846,,,,2015-10-03 08:00,2015-10-14 16:00,,2015-09-22 08:00,2015-10-03 16:00,2015-09-22 08:00,2015-10-03 16:00,2015-09-22 08:00,2015-10-03 16:00,2015-10-03 08:00,2015-10-14 16:00,,PT_Normal,,,,,JnIztKTQ60mGKJzcRd57Wg,PZZhAfuGQDiQAj0Gsspf8Q,,,N,0,0,,,2014-04-05 12:28,2014-04-05 13:21,admin,admin,
2234,141977,1749,36505,642,0,N,N,N,CP_Drtn,TT_Task,DT_FixedDUR2,TK_NotStart,BL3-MEP-PL-9F-1010,Low Level Drainage Pipes Installation,,88,0,96,0,12.67,12.67,96,2291.461713,0,2291.461713,,,,2015-10-03 08:00,2015-10-14 16:00,,2015-09-22 08:00,2015-10-03 16:00,2015-09-22 08:00,2015-10-03 16:00,2015-09-22 08:00,2015-10-03 16:00,2015-10-03 08:00,2015-10-14 16:00,,PT_Normal,,,,,lUpQaWhi102PAx/e5S2MHQ,b71vUak4TSS4NnbDA17kFw,,,N,0,0,,,2014-04-05 12:28,2014-04-05 13:21,admin,admin,
2235,141978,1749,36505,642,0,N,N,N,CP_Drtn,TT_Task,DT_FixedDUR2,TK_NotStart,BL3-MEP-PL-9F-1020,Supports  installation for High level Pipes,,176,0,96,0,16.352,16.352,96,831.682549,0,831.682549,,,,2015-10-14 08:00,2015-10-25 16:00,,2015-09-22 08:00,2015-10-03 16:00,2015-09-22 08:00,2015-10-03 16:00,2015-09-22 08:00,2015-10-03 16:00,2015-10-14 08:00,2015-10-25 16:00,,PT_Normal,,,,,Rb5bLP8qckGVq+2FOc9kcw,eiPxqEEtTN6bYGuRMdTJWQ,,,N,0,0,,,2014-04-05 12:28,2014-04-05 13:21,admin,admin,
2236,141979,1749,36506,642,0,N,N,N,CP_Drtn,TT_Task,DT_FixedDUR2,TK_NotStart,BL3-MEP-PL-9F-2030,Floor Drain Installation,,472,152,48,0,6,6,48,554.143324,0,554.143324,,,,2016-01-24 08:00,2016-01-29 16:00,,2015-11-26 08:00,2015-12-01 16:00,2015-11-26 08:00,2015-12-01 16:00,2015-11-26 08:00,2015-12-01 16:00,2016-01-24 08:00,2016-01-29 16:00,,PT_Normal,,,,,UwF13+2TVUC4NsB5mg02LQ,/frs4zx0Sv2c6EumCK3Hxg,,,N,0,0,,,2014-04-05 12:28,2014-04-05 13:21,admin,admin,
2237,141980,1749,36506,642,0,N,N,N,CP_Drtn,TT_Task,DT_FixedDUR2,TK_NotStart,BL3-MEP-PL-9F-2000,High Level Water Supply Pipes and Fittings Installation,,176,0,168,0,150.02,150.02,168,1329.597866,0,1329.597866,,,,2015-10-26 08:00,2015-11-15 16:00,,2015-10-04 08:00,2015-10-24 16:00,2015-10-04 08:00,2015-10-24 16:00,2015-10-04 08:00,2015-10-24 16:00,2015-10-26 08:00,2015-11-15 16:00,,PT_Normal,,,,,UfAdy/GkHEi2FcoRIMcWvg,8ncFGKWQRjC5ZwpQLV4UmQ,,,N,0,0,,,2014-04-05 12:28,2014-04-05 13:21,admin,admin,
2238,141981,1749,36506,642,0,N,N,N,CP_Drtn,TT_Task,DT_FixedDUR2,TK_NotStart,BL3-MEP-PL-9F-2010,High Level Drainage Pipes Installation,,176,0,168,0,244.38,244.38,168,6583.525267,0,6583.525267,,,,2015-10-26 08:00,2015-11-15 16:00,,2015-10-04 08:00,2015-10-24 16:00,2015-10-04 08:00,2015-10-24 16:00,2015-10-04 08:00,2015-10-24 16:00,2015-10-26 08:00,2015-11-15 16:00,,PT_Normal,,,,,/umP51ChhU2IUc+bKJzzGA,aEPfnMc0RMiNMiVoek6Syw,,,N,0,0,,,2014-04-05 12:28,2014-04-05 13:21,admin,admin,
2239,141982,1749,36506,642,0,N,N,N,CP_Drtn,TT_Task,DT_FixedDUR2,TK_NotStart,BL3-MEP-PL-9F-2020,Water Supply Pipes Pressure Test,4456,176,120,48,0,48,48,48,151.744312,0,151.744312,,,,2015-11-16 08:00,2015-11-21 16:00,,2015-10-25 08:00,2015-10-30 16:00,2015-10-25 08:00,2015-10-30 16:00,2015-10-25 08:00,2015-10-30 16:00,2015-11-16 08:00,2015-11-21 16:00,,PT_Normal,,,,,B7CYqnsy0USCLaSUoPfRVA,T8EkyKIgSOyPEtcn8boLIQ,,,N,0,0,,,2014-04-05 12:28,2014-04-05 13:21,admin,admin,
2240,141983,1749,36506,642,0,N,N,N,CP_Drtn,TT_Task,DT_FixedDUR2,TK_NotStart,BL3-MEP-PL-9F-2040,Drainage Pipes Gravity Test,,176,120,48,0,48,48,48,826.240719,0,826.240719,,,,2015-11-16 08:00,2015-11-21 16:00,,2015-10-25 08:00,2015-10-30 16:00,2015-10-25 08:00,2015-10-30 16:00,2015-10-25 08:00,2015-10-30 16:00,2015-11-16 08:00,2015-11-21 16:00,,PT_Normal,,,,,iDCBJAxX80GXp4iEWn3W8w,KrZHGwnaQoSGeuivpw910w,,,N,0,0,,,2014-04-05 12:28,2014-04-05 13:21,admin,admin,
2241,141984,1749,36616,642,0,N,N,N,CP_Drtn,TT_Task,DT_FixedDUR2,TK_NotStart,BL3-MEP-PL-9F-3000,Sanitary Ware Installation Including Connection,,16,0,112,0,383.862,383.862,112,4453.516455,0,4453.516455,,,,2015-12-28 08:00,2016-01-10 16:00,,2015-12-26 08:00,2016-01-08 16:00,2015-12-26 08:00,2016-01-08 16:00,2015-12-26 08:00,2016-01-08 16:00,2015-12-28 08:00,2016-01-10 16:00,,PT_Normal,,,,,CNM7xaH93kqxiS4Rqd9CcQ,wjRxJg1/Toay9jsT4xFPTA,,,N,0,0,,,2014-04-05 12:28,2014-04-05 13:21,admin,admin,
2242,141985,1749,36616,642,0,N,N,N,CP_Drtn,TT_Task,DT_FixedDUR2,TK_NotStart,BL3-MEP-PL-9F-3010,Sanitary Ware Accessories Installation,,80,80,48,0,36.45,36.45,48,166.215378,0,166.215378,,,,2016-01-19 08:00,2016-01-24 16:00,,2016-01-09 08:00,2016-01-14 16:00,2016-01-09 08:00,2016-01-14 16:00,2016-01-09 08:00,2016-01-14 16:00,2016-01-19 08:00,2016-01-24 16:00,,PT_Normal,,,,,k2Labrcxhk+HTp/yfT81lQ,VkP/NWWDQhekWJhyx2wjDA,,,N,0,0,,,2014-04-05 12:28,2014-04-05 13:21,admin,admin,
2243,141986,1749,36509,642,0,N,N,N,CP_Drtn,TT_Task,DT_FixedDUR2,TK_NotStart,BL3-MEP-FF-9F-3000,Fire Extinguisher Installation,,48,0,16,0,8,8,16,1076.993507,0,1076.993507,,,,2016-02-06 08:00,2016-02-07 16:00,,2016-01-31 08:00,2016-02-01 16:00,2016-01-31 08:00,2016-02-01 16:00,2016-01-31 08:00,2016-02-01 16:00,2016-02-06 08:00,2016-02-07 16:00,,PT_Normal,,,,,6UvPGZ/kCU6R+lT1kyekjg,v1lF8yxDT2KP9Qa+EpZ/6Q,,,N,0,0,,,2014-04-05 12:28,2014-04-05 13:21,admin,admin,
2244,141987,1749,36509,642,0,N,N,N,CP_Drtn,TT_Task,DT_FixedDUR2,TK_NotStart,BL3-MEP-FF-9F-3010,Hose reel Cabinet Installation and Connection,,48,0,48,0,192,192,48,1336.852298,0,1336.852298,,,,2016-02-05 08:00,2016-02-10 16:00,,2016-01-30 08:00,2016-02-04 16:00,2016-01-30 08:00,2016-02-04 16:00,2016-01-30 08:00,2016-02-04 16:00,2016-02-05 08:00,2016-02-10 16:00,,PT_Normal,,,,,70y4LLB2+0C8QDkFtr0hkw,bkWV8IbASbOuotXx4CG6OA,,,N,0,0,,,2014-04-05 12:28,2014-04-05 13:21,admin,admin,
2245,141988,1749,36302,642,0,N,N,N,CP_Drtn,TT_Task,DT_FixedDUR2,TK_NotStart,BL3-MEP-EL-9F-1000,PVC Back Boxes and Conduits  Fixing in Wall,,24,0,96,0,384,384,96,3319.67233,0,3319.67233,,,,2015-09-25 08:00,2015-10-06 16:00,,2015-09-22 08:00,2015-10-03 16:00,2015-09-22 08:00,2015-10-03 16:00,2015-09-22 08:00,2015-10-03 16:00,2015-09-25 08:00,2015-10-06 16:00,,PT_Normal,,,,,ezWlUyx//Ua++H6c1NXJQQ,WHelIxlNQGWrK2u9xeNKag,,,N,0,0,,,2014-04-05 12:28,2014-04-05 13:21,admin,admin,
2246,141989,1749,36302,642,0,N,N,N,CP_Drtn,TT_Task,DT_FixedDUR2,TK_NotStart,BL3-MEP-EL-9F-1010,DB's Inclosure Fixing,4455,88,64,48,0,96,96,48,2136.399392,0,2136.399392,,,,2015-10-09 08:00,2015-10-14 16:00,,2015-09-28 08:00,2015-10-03 16:00,2015-09-28 08:00,2015-10-03 16:00,2015-09-28 08:00,2015-10-03 16:00,2015-10-09 08:00,2015-10-14 16:00,,PT_Normal,,,,,/CE1OX1FtUWkINhz/rV/iw,FkIMBOBxQk2bAbZ/NimvZw,,,N,0,0,,,2014-04-05 12:28,2014-04-05 13:21,admin,admin,
2247,141990,1749,36194,642,0,N,N,N,CP_Drtn,TT_Task,DT_FixedDUR2,TK_NotStart,BL3-MEP-EL-9F-2060,SMDB's  Installation,,664,32,48,0,45,45,48,4202.598932,0,4202.598932,,,,2016-01-22 08:00,2016-01-27 16:00,,2015-10-31 08:00,2015-11-05 16:00,2015-10-31 08:00,2015-11-05 16:00,2015-10-31 08:00,2015-11-05 16:00,2016-01-22 08:00,2016-01-27 16:00,,PT_Normal,,,,,2T26PDFttEGAJOy+p4VNxQ,Tzi6l7mgRZqkUSAktPYVhA,,,N,0,0,,,2014-04-05 12:28,2014-04-05 13:21,admin,admin,
2248,141991,1749,36194,642,0,N,N,N,CP_Drtn,TT_Task,DT_FixedDUR2,TK_NotStart,BL3-MEP-EL-9F-2000,Lighting  Wiring,,264,16,96,0,241.713,241.713,96,3578.08423,0,3578.08423,,,,2015-11-10 08:00,2015-11-21 16:00,,2015-10-08 08:00,2015-10-19 16:00,2015-10-08 08:00,2015-10-19 16:00,2015-10-08 08:00,2015-10-19 16:00,2015-11-10 08:00,2015-11-21 16:00,,PT_Normal,,,,,UAcBtDQX5Em6Z4MGmyN9bw,WcbplS9DRoCcpkT/MR+mCA,,,N,0,0,,,2014-04-05 12:28,2014-04-05 13:21,admin,admin,
2249,141992,1749,36194,642,0,N,N,N,CP_Drtn,TT_Task,DT_FixedDUR2,TK_NotStart,BL3-MEP-EL-9F-2010,Power Points Wiring,,264,16,96,0,192,192,96,2906.213289,0,2906.213289,,,,2015-11-10 08:00,2015-11-21 16:00,,2015-10-08 08:00,2015-10-19 16:00,2015-10-08 08:00,2015-10-19 16:00,2015-10-08 08:00,2015-10-19 16:00,2015-11-10 08:00,2015-11-21 16:00,,PT_Normal,,,,,xJTOfPTilkSfhGw/WIkeRw,4DPL0pPKS8qP22CSk34Jfg,,,N,0,0,,,2014-04-05 12:28,2014-04-05 13:21,admin,admin,
2250,141993,1749,36194,642,0,N,N,N,CP_Drtn,TT_Task,DT_FixedDUR2,TK_NotStart,BL3-MEP-EL-9F-2020,Cable Tray and Trunking Installation,,264,0,112,0,336,336,112,9078.448617,0,9078.448617,,,,2015-11-08 08:00,2015-11-21 16:00,,2015-10-06 08:00,2015-10-19 16:00,2015-10-06 08:00,2015-10-19 16:00,2015-10-06 08:00,2015-10-19 16:00,2015-11-08 08:00,2015-11-21 16:00,,PT_Normal,,,,,YSBHCcbf/EukaK0CJVxDcg,SLTl23zHQAyWRzkDB5s/pQ,,,N,0,0,,,2014-04-05 12:28,2014-04-05 13:21,admin,admin,
2251,141994,1749,36194,642,0,N,N,N,CP_Drtn,TT_Task,DT_FixedDUR2,TK_NotStart,BL3-MEP-EL-9F-2030,Emergency Light Wiring,,264,40,64,0,128,128,64,1210.028798,0,1210.028798,,,,2015-11-14 08:00,2015-11-21 16:00,,2015-10-12 08:00,2015-10-19 16:00,2015-10-12 08:00,2015-10-19 16:00,2015-10-12 08:00,2015-10-19 16:00,2015-11-14 08:00,2015-11-21 16:00,,PT_Normal,,,,,WcFlly7IA0eJhgraqbuieg,igjU7GqsTH+V9X6lgkIruA,,,N,0,0,,,2014-04-05 12:28,2014-04-05 13:21,admin,admin,
2252,141995,1749,36194,642,0,N,N,N,CP_Drtn,TT_Task,DT_FixedDUR2,TK_NotStart,BL3-MEP-EL-9F-2040,Fire Alarm System Wiring,,264,16,96,0,192,192,96,7123.009694,0,7123.009694,,,,2015-11-10 08:00,2015-11-21 16:00,,2015-10-08 08:00,2015-10-19 16:00,2015-10-08 08:00,2015-10-19 16:00,2015-10-08 08:00,2015-10-19 16:00,2015-11-10 08:00,2015-11-21 16:00,,PT_Normal,,,,,8tTpYK9gbka4fSiyBoGi/Q,TJaMXDGDRK+nBcZBrfaoqQ,,,N,0,0,,,2014-04-05 12:28,2014-04-05 13:21,admin,admin,
2253,141996,1749,36194,642,0,N,N,N,CP_Drtn,TT_Task,DT_FixedDUR2,TK_NotStart,BL3-MEP-EL-9F-2070,DB's Installation and Termination,4455,80,0,96,0,288,288,96,4982.925025,0,4982.925025,,,,2015-11-10 08:00,2015-11-21 16:00,,2015-10-31 08:00,2015-11-11 16:00,2015-10-31 08:00,2015-11-11 16:00,2015-10-31 08:00,2015-11-11 16:00,2015-11-10 08:00,2015-11-21 16:00,,PT_Normal,,,,,JOa/G0pjjkSK7KcJ52HpEQ,RRjxOpLIQz+nvERJT24cpw,,,N,0,0,,,2014-04-05 12:28,2014-04-05 13:21,admin,admin,
2254,141997,1749,36194,642,0,N,N,N,CP_Drtn,TT_Task,DT_FixedDUR2,TK_NotStart,BL3-MEP-EL-9F-2050,Low Current  System Wiring,4455,720,296,112,0,244,244,112,38231.783306,0,38231.783306,,,,2016-01-04 08:00,2016-01-17 16:00,,2015-10-06 08:00,2015-10-19 16:00,2015-10-06 08:00,2015-10-19 16:00,2015-10-06 08:00,2015-10-19 16:00,2016-01-04 08:00,2016-01-17 16:00,,PT_Normal,,,,,/fD5JkC1FESJ9wdsUwhnpQ,wja2e3vET/GjY94pDRd4rQ,,,N,0,0,,,2014-04-05 12:28,2014-04-05 13:21,admin,admin,
2255,141998,1749,36204,642,0,N,N,N,CP_Drtn,TT_Task,DT_FixedDUR2,TK_NotStart,BL3-MEP-EL-9F-3020,Lights Fitting Fixing,,320,104,112,0,244,244,112,7336.659378,0,7336.659378,,,,2016-01-05 08:00,2016-01-18 16:00,,2015-11-26 08:00,2015-12-09 16:00,2015-11-26 08:00,2015-12-09 16:00,2015-11-26 08:00,2015-12-09 16:00,2016-01-05 08:00,2016-01-18 16:00,,PT_Normal,,,,,5dXqMPl3RUy0CZWHnyObTg,yku+bAJ3QeiJ3S/5BNAAwQ,,,N,0,0,,,2014-04-05 12:28,2014-04-05 13:21,admin,admin,
2256,141999,1749,36204,642,0,N,N,N,CP_Drtn,TT_Task,DT_FixedDUR2,TK_NotStart,BL3-MEP-EL-9F-3070,Sockets and Switches Fixing,,464,152,64,0,128,128,64,1174.957134,0,1174.957134,,,,2016-01-23 08:00,2016-01-30 16:00,,2015-11-26 08:00,2015-12-03 16:00,2015-11-26 08:00,2015-12-03 16:00,2015-11-26 08:00,2015-12-03 16:00,2016-01-23 08:00,2016-01-30 16:00,,PT_Normal,,,,,igIX+jmasU2r6itt8O5XKg,V3wmSEvoQcWBrEdz9H2EPg,,,N,0,0,,,2014-04-05 12:28,2014-04-05 13:21,admin,admin,
2257,142000,1749,36204,642,0,N,N,N,CP_Drtn,TT_Task,DT_FixedDUR2,TK_NotStart,BL3-MEP-EL-9F-3030,Emergency Light Fixing,,504,152,64,0,128,128,64,5722.024623,0,5722.024623,,,,2016-01-28 08:00,2016-02-04 16:00,,2015-11-26 08:00,2015-12-03 16:00,2015-11-26 08:00,2015-12-03 16:00,2015-11-26 08:00,2015-12-03 16:00,2016-01-28 08:00,2016-02-04 16:00,,PT_Normal,,,,,qwevvUkARUCRMJhts785bg,wpvV88b3QpeHZ4THbzKmYg,,,N,0,0,,,2014-04-05 12:28,2014-04-05 13:21,admin,admin,
2258,142001,1749,36204,642,0,N,N,N,CP_Drtn,TT_Task,DT_FixedDUR2,TK_NotStart,BL3-MEP-EL-9F-3040,Fire Alarm System Detector Installation,,368,120,96,0,192,192,96,4046.378277,0,4046.378277,,,,2016-01-11 08:00,2016-01-22 16:00,,2015-11-26 08:00,2015-12-07 16:00,2015-11-26 08:00,2015-12-07 16:00,2015-11-26 08:00,2015-12-07 16:00,2016-01-11 08:00,2016-01-22 16:00,,PT_Normal,,,,,omWzrkByM0+oUkiJdbX28A,9mGSp+WUSWK7Y3BQah/zpg,,,N,0,0,,,2014-04-05 12:28,2014-04-05 13:21,admin,admin,
2259,142002,1749,36204,642,0,N,N,N,CP_Drtn,TT_Task,DT_FixedDUR2,TK_NotStart,BL3-MEP-EL-9F-3010,SMDB's  Termination and Final Connection,,504,168,48,0,192,192,48,2791.825001,0,2791.825001,,,,2016-01-28 08:00,2016-02-02 16:00,,2015-11-26 08:00,2015-12-01 16:00,2015-11-26 08:00,2015-12-01 16:00,2015-11-26 08:00,2015-12-01 16:00,2016-01-28 08:00,2016-02-02 16:00,,PT_Normal,,,,,Ie+AtaFVSkWOF0TQFJk4jA,NlvxpM3SQhmzzw23UTWgCg,,,N,0,0,,,2014-04-05 12:28,2014-04-05 13:21,admin,admin,
2260,142003,1749,36194,642,0,N,N,N,CP_Drtn,TT_Task,DT_FixedDUR2,TK_NotStart,BL3-MEP-EL-9F-3000,Power Cable Puling,,384,0,112,0,168,168,112,6375.759893,0,6375.759893,,,,2015-12-30 08:00,2016-01-12 16:00,,2015-11-12 08:00,2015-11-25 16:00,2015-11-12 08:00,2015-11-25 16:00,2015-11-12 08:00,2015-11-25 16:00,2015-12-30 08:00,2016-01-12 16:00,,PT_Normal,,,,,cj/OaqI55UC28u5tjwYpTA,v1AEjlKxTUG3EEKrQpoFWQ,,,N,0,0,,,2014-04-05 12:28,2014-04-05 13:21,admin,admin,
2261,142004,1749,36204,642,0,N,N,N,CP_Drtn,TT_Task,DT_FixedDUR2,TK_NotStart,BL3-MEP-EL-9F-3050,Despature for Low Current  System Installation,4455,424,0,112,0,336,336,112,72752.164276,0,72752.164276,,,,2016-01-18 08:00,2016-01-31 16:00,,2015-11-26 08:00,2015-12-09 16:00,2015-11-26 08:00,2015-12-09 16:00,2015-11-26 08:00,2015-12-09 16:00,2016-01-18 08:00,2016-01-31 16:00,,PT_Normal,,,,,147uyYflFUyc4FhEgeQV+g,rcfJM1pERB+9u1c7aMeENw,,,N,0,0,,,2014-04-05 12:28,2014-04-05 13:21,admin,admin,
2262,142005,1749,36204,642,0,N,N,N,CP_Drtn,TT_Task,DT_FixedDUR2,TK_NotStart,BL3-MEP-EL-9F-3060,Low Current  System Outlet installation and Connection,4455,424,376,80,0,80,80,80,3870.787498,0,3870.787498,,,,2016-02-01 08:00,2016-02-10 16:00,,2015-12-10 08:00,2015-12-19 16:00,2015-12-10 08:00,2015-12-19 16:00,2015-12-10 08:00,2015-12-19 16:00,2016-02-01 08:00,2016-02-10 16:00,,PT_Normal,,,,,FKNGeuIUIEaeh4y28xRB0g,tT5IAUa0TpKLXTF3+LocYw,,,N,0,0,,,2014-04-05 12:28,2014-04-05 13:21,admin,admin,
2263,142006,1749,36428,642,0,N,N,N,CP_Drtn,TT_Task,DT_FixedDUR2,TK_NotStart,BL3-MEP-AC-10F-1000,Supports and Hungers Fixing,,192,56,96,0,192,192,96,338.467259,0,338.467259,,,,2015-10-30 08:00,2015-11-10 16:00,,2015-10-06 08:00,2015-10-17 16:00,2015-10-06 08:00,2015-10-17 16:00,2015-10-06 08:00,2015-10-17 16:00,2015-10-30 08:00,2015-11-10 16:00,,PT_Normal,,,,,WtQjyANbyUyzc3Lx9CiVlg,UO5ouBSMQRKrzkL8jOMYwA,,,N,0,0,,,2014-04-05 12:28,2014-04-05 13:21,admin,admin,
2264,142007,1749,36529,642,0,N,N,N,CP_Drtn,TT_Task,DT_FixedDUR2,TK_NotStart,BL3-MEP-AC-10F-2010,Duct Installation and Insulation,4454,144,0,168,0,263,263,168,4350.939473,0,4350.939473,,,,2015-11-12 08:00,2015-12-02 16:00,,2015-10-25 08:00,2015-11-14 16:00,2015-10-25 08:00,2015-11-14 16:00,2015-10-25 08:00,2015-11-14 16:00,2015-11-12 08:00,2015-12-02 16:00,,PT_Normal,,,,,VbRwlZ+ch0qzcVFHmNLCaQ,jLk+KNG9QGu1tWKOXYUsOQ,,,N,0,0,,,2014-04-05 12:28,2014-04-05 13:21,admin,admin,
2265,142008,1749,36529,642,0,N,N,N,CP_Drtn,TT_Task,DT_FixedDUR2,TK_NotStart,BL3-MEP-AC-10F-2030,Duct Accessories Installation,4457,144,144,112,0,448,448,112,666.965527,0,666.965527,,,,2015-12-03 08:00,2015-12-16 16:00,,2015-11-15 08:00,2015-11-28 16:00,2015-11-15 08:00,2015-11-28 16:00,2015-11-15 08:00,2015-11-28 16:00,2015-12-03 08:00,2015-12-16 16:00,,PT_Normal,,,,,JatUT1ONtUilCJlzLAsTbA,xmjvUUQ0StyljY5cgsOG5w,,,N,0,0,,,2014-04-05 12:28,2014-04-05 13:21,admin,admin,
2266,142009,1749,36529,642,0,N,N,N,CP_Drtn,TT_Task,DT_FixedDUR2,TK_NotStart,BL3-MEP-AC-10F-2000,FCU's Installation,4457,288,152,64,0,192,192,64,6000.055155,0,6000.055155,,,,2015-11-30 08:00,2015-12-07 16:00,,2015-10-25 08:00,2015-11-01 16:00,2015-10-25 08:00,2015-11-01 16:00,2015-10-25 08:00,2015-11-01 16:00,2015-11-30 08:00,2015-12-07 16:00,,PT_Normal,,,,,bcNJxVGBf0S9+gMfgQ2a0g,vWJydc37Q4KKqZBmlTwf/w,,,N,0,0,,,2014-04-05 12:28,2014-04-05 13:21,admin,admin,
2267,142010,1749,36529,642,0,N,N,N,CP_Drtn,TT_Task,DT_FixedDUR2,TK_NotStart,BL3-MEP-AC-10F-2020,Chilled Water Pipes and Fittings Installation,4457,136,0,168,0,840,840,168,5251.194852,0,5251.194852,,,,2015-11-11 08:00,2015-12-01 16:00,,2015-10-25 08:00,2015-11-14 16:00,2015-10-25 08:00,2015-11-14 16:00,2015-10-25 08:00,2015-11-14 16:00,2015-11-11 08:00,2015-12-01 16:00,,PT_Normal,,,,,29YveA7BSUmQ5sFwW2A8vA,BZ9o3+cPQO+HsSu9JcrKpg,,,N,0,0,,,2014-04-05 12:28,2014-04-05 13:21,admin,admin,
2268,142011,1749,36529,642,0,N,N,N,CP_Drtn,TT_Task,DT_FixedDUR2,TK_NotStart,BL3-MEP-AC-10F-2040,Chilled Water Pipes Pressure Test,4457,136,0,48,0,96,96,48,587.116683,0,587.116683,,,,2015-12-02 08:00,2015-12-07 16:00,,2015-11-15 08:00,2015-11-20 16:00,2015-11-15 08:00,2015-11-20 16:00,2015-11-15 08:00,2015-11-20 16:00,2015-12-02 08:00,2015-12-07 16:00,,PT_Normal,,,,,+DiJtsfwVkOZzovGB4a7ig,+YxAkHuoQneJo3ViFY2KSw,,,N,0,0,,,2014-04-05 12:28,2014-04-05 13:21,admin,admin,
2269,142012,1749,36529,642,0,N,N,N,CP_Drtn,TT_Task,DT_FixedDUR2,TK_NotStart,BL3-MEP-AC-10F-2050,Chilled Water Pipes Insulation,4457,576,456,96,0,384,384,96,1670.208495,0,1670.208495,,,,2016-02-01 08:00,2016-02-12 16:00,,2015-11-21 08:00,2015-12-02 16:00,2015-11-21 08:00,2015-12-02 16:00,2015-11-21 08:00,2015-12-02 16:00,2016-02-01 08:00,2016-02-12 16:00,,PT_Normal,,,,,peT3bHpdrkyJU6x3IQ+7Zg,jJmNoLvVTie5Rk/UAg1fGA,,,N,0,0,,,2014-04-05 12:28,2014-04-05 13:21,admin,admin,
2270,142013,1749,36529,642,0,N,N,N,CP_Drtn,TT_Task,DT_FixedDUR2,TK_NotStart,BL3-MEP-AC-10F-2060,Valve Package Installation,4457,136,0,48,0,96,96,48,2386.490429,0,2386.490429,,,,2015-12-08 08:00,2015-12-13 16:00,,2015-11-21 08:00,2015-11-26 16:00,2015-11-21 08:00,2015-11-26 16:00,2015-11-21 08:00,2015-11-26 16:00,2015-12-08 08:00,2015-12-13 16:00,,PT_Normal,,,,,OO2uaJ+E0Uqxq8cPormGZQ,UMjbG3JrTQyK7Jei07lJJQ,,,N,0,0,,,2014-04-05 12:28,2014-04-05 13:21,admin,admin,
2271,142014,1749,36529,642,0,N,N,N,CP_Drtn,TT_Task,DT_FixedDUR2,TK_NotStart,BL3-MEP-AC-10F-2070,FCU's Drain Pipes Installation,4457,136,136,24,0,48,48,24,519.927167,0,519.927167,,,,2015-12-14 08:00,2015-12-16 16:00,,2015-11-27 08:00,2015-11-29 16:00,2015-11-27 08:00,2015-11-29 16:00,2015-11-27 08:00,2015-11-29 16:00,2015-12-14 08:00,2015-12-16 16:00,,PT_Normal,,,,,lJdjLq1kakygbAEp18SE2w,yVRxo/Q+RfqpOK1tDcfnSw,,,N,0,0,,,2014-04-05 12:28,2014-04-05 13:21,admin,admin,
2272,142015,1749,36639,642,0,N,N,N,CP_Drtn,TT_Task,DT_FixedDUR2,TK_NotStart,BL3-MEP-AC-10F-3000,Grills and Diffusers Fixing,,320,216,96,0,384,384,96,11550.608192,0,11550.608192,,,,2016-02-01 08:00,2016-02-12 16:00,,2015-12-23 08:00,2016-01-03 16:00,2015-12-23 08:00,2016-01-03 16:00,2015-12-23 08:00,2016-01-03 16:00,2016-02-01 08:00,2016-02-12 16:00,,PT_Normal,,,,,NwrCjZI+SUiM0XyvXkjv9w,u36kVvqbTteKgtqUtuAcJg,,,N,0,0,,,2014-04-05 12:28,2014-04-05 13:21,admin,admin,
2273,142016,1749,36426,642,0,N,N,N,CP_Drtn,TT_Task,DT_FixedDUR2,TK_NotStart,BL3-MEP-PL-10F-1000,Low Level Water Supply Pipes Installation,,264,56,96,0,42,42,96,725.216846,0,725.216846,,,,2015-11-08 08:00,2015-11-19 16:00,,2015-10-06 08:00,2015-10-17 16:00,2015-10-06 08:00,2015-10-17 16:00,2015-10-06 08:00,2015-10-17 16:00,2015-11-08 08:00,2015-11-19 16:00,,PT_Normal,,,,,3/XWBpDY7k2z/O17g0DAwA,gMtwAT2BTKS6gy3PnY9kwA,,,N,0,0,,,2014-04-05 12:28,2014-04-05 13:21,admin,admin,
2274,142017,1749,36426,642,0,N,N,N,CP_Drtn,TT_Task,DT_FixedDUR2,TK_NotStart,BL3-MEP-PL-10F-1010,Low Level Drainage Pipes Installation,,264,56,96,0,12.67,12.67,96,2291.461713,0,2291.461713,,,,2015-11-08 08:00,2015-11-19 16:00,,2015-10-06 08:00,2015-10-17 16:00,2015-10-06 08:00,2015-10-17 16:00,2015-10-06 08:00,2015-10-17 16:00,2015-11-08 08:00,2015-11-19 16:00,,PT_Normal,,,,,lEJnlTSe6E+671FqyM8/kg,aXgUgudQQDWazccRrgYaVA,,,N,0,0,,,2014-04-05 12:28,2014-04-05 13:21,admin,admin,
2275,142018,1749,36426,642,0,N,N,N,CP_Drtn,TT_Task,DT_FixedDUR2,TK_NotStart,BL3-MEP-PL-10F-1020,Supports  installation for High level Pipes,,264,56,96,0,16.352,16.352,96,831.682549,0,831.682549,,,,2015-11-08 08:00,2015-11-19 16:00,,2015-10-06 08:00,2015-10-17 16:00,2015-10-06 08:00,2015-10-17 16:00,2015-10-06 08:00,2015-10-17 16:00,2015-11-08 08:00,2015-11-19 16:00,,PT_Normal,,,,,hZoOAuDrOkacgQdJYLWibQ,Ocy15YZlS3qnITQx8fwsaw,,,N,0,0,,,2014-04-05 12:28,2014-04-05 13:21,admin,admin,
2276,142019,1749,36433,642,0,N,N,N,CP_Drtn,TT_Task,DT_FixedDUR2,TK_NotStart,BL3-MEP-PL-10F-2030,Floor Drain Installation,,320,232,48,0,6,6,48,554.143324,0,554.143324,,,,2016-01-30 08:00,2016-02-04 16:00,,2015-12-21 08:00,2015-12-26 16:00,2015-12-21 08:00,2015-12-26 16:00,2015-12-21 08:00,2015-12-26 16:00,2016-01-30 08:00,2016-02-04 16:00,,PT_Normal,,,,,mTiRHJe3YkqU966LoFU9Uw,BmXOcvQWTUG+U3Cu1tP3uQ,,,N,0,0,,,2014-04-05 12:28,2014-04-05 13:21,admin,admin,
2277,142020,1749,36433,642,0,N,N,N,CP_Drtn,TT_Task,DT_FixedDUR2,TK_NotStart,BL3-MEP-PL-10F-2000,High Level Water Supply Pipes and Fittings Installation,,208,0,168,0,150.02,150.02,168,1329.597866,0,1329.597866,,,,2015-11-20 08:00,2015-12-10 16:00,,2015-10-25 08:00,2015-11-14 16:00,2015-10-25 08:00,2015-11-14 16:00,2015-10-25 08:00,2015-11-14 16:00,2015-11-20 08:00,2015-12-10 16:00,,PT_Normal,,,,,6s8hYjDtmECb6dgthqo5Tg,IVLcx6jkR/KrBcGlFft7dQ,,,N,0,0,,,2014-04-05 12:28,2014-04-05 13:21,admin,admin,
2278,142021,1749,36433,642,0,N,N,N,CP_Drtn,TT_Task,DT_FixedDUR2,TK_NotStart,BL3-MEP-PL-10F-2010,High Level Drainage Pipes Installation,,208,0,168,0,244.38,244.38,168,6583.525267,0,6583.525267,,,,2015-11-20 08:00,2015-12-10 16:00,,2015-10-25 08:00,2015-11-14 16:00,2015-10-25 08:00,2015-11-14 16:00,2015-10-25 08:00,2015-11-14 16:00,2015-11-20 08:00,2015-12-10 16:00,,PT_Normal,,,,,XJD9z0NsE0y7cMBLqyYpAw,WttczVLASO6QHE2bf0ePMg,,,N,0,0,,,2014-04-05 12:28,2014-04-05 13:21,admin,admin,
2279,142022,1749,36433,642,0,N,N,N,CP_Drtn,TT_Task,DT_FixedDUR2,TK_NotStart,BL3-MEP-PL-10F-2020,Water Supply Pipes Pressure Test,4456,208,208,48,0,48,48,48,151.744312,0,151.744312,,,,2015-12-11 08:00,2015-12-16 16:00,,2015-11-15 08:00,2015-11-20 16:00,2015-11-15 08:00,2015-11-20 16:00,2015-11-15 08:00,2015-11-20 16:00,2015-12-11 08:00,2015-12-16 16:00,,PT_Normal,,,,,y54cYE8aYE6N4foTXYbVgw,OAJP6Xy8QW+pn9qE9lacYQ,,,N,0,0,,,2014-04-05 12:28,2014-04-05 13:21,admin,admin,
2280,142023,1749,36433,642,0,N,N,N,CP_Drtn,TT_Task,DT_FixedDUR2,TK_NotStart,BL3-MEP-PL-10F-2040,Drainage Pipes Gravity Test,,208,208,48,0,48,48,48,826.240719,0,826.240719,,,,2015-12-11 08:00,2015-12-16 16:00,,2015-11-15 08:00,2015-11-20 16:00,2015-11-15 08:00,2015-11-20 16:00,2015-11-15 08:00,2015-11-20 16:00,2015-12-11 08:00,2015-12-16 16:00,,PT_Normal,,,,,XWCzdEt+X0eijaLxLnUlaA,nCqqYKEhRgG4S7dV+IXDkQ,,,N,0,0,,,2014-04-05 12:28,2014-04-05 13:21,admin,admin,
2281,142024,1749,36525,642,0,N,N,N,CP_Drtn,TT_Task,DT_FixedDUR2,TK_NotStart,BL3-MEP-PL-10F-3000,Sanitary Ware Installation Including Connection,,0,0,112,0,383.862,383.862,112,4453.516455,0,4453.516455,,,,2016-01-11 08:00,2016-01-24 16:00,,2016-01-11 08:00,2016-01-24 16:00,2016-01-11 08:00,2016-01-24 16:00,2016-01-11 08:00,2016-01-24 16:00,2016-01-11 08:00,2016-01-24 16:00,,PT_Normal,,,,,gQakcO/m/keYEacHP2KoDA,d0tX9ScfSSm/DDA+5yRMQg,,,Y,0,0,,,2014-04-05 12:28,2014-04-05 13:21,admin,admin,
2282,142025,1749,36525,642,0,N,N,N,CP_Drtn,TT_Task,DT_FixedDUR2,TK_NotStart,BL3-MEP-PL-10F-3010,Sanitary Ware Accessories Installation,,0,0,48,0,36.45,36.45,48,166.215378,0,166.215378,,,,2016-01-25 08:00,2016-01-30 16:00,,2016-01-25 08:00,2016-01-30 16:00,2016-01-25 08:00,2016-01-30 16:00,2016-01-25 08:00,2016-01-30 16:00,2016-01-25 08:00,2016-01-30 16:00,,PT_Normal,,,,,A+m8U/KkeEeeKEfwNFFFbg,pT9DSC2GQEWIOOnf0e4/+Q,,,Y,0,0,,,2014-04-05 12:28,2014-04-05 13:21,admin,admin,
2283,142026,1749,36541,642,0,N,N,N,CP_Drtn,TT_Task,DT_FixedDUR2,TK_NotStart,BL3-MEP-FF-10F-3000,Fire Extinguisher Installation,,48,0,16,0,8,8,16,1076.993507,0,1076.993507,,,,2016-02-08 08:00,2016-02-09 16:00,,2016-02-02 08:00,2016-02-03 16:00,2016-02-02 08:00,2016-02-03 16:00,2016-02-02 08:00,2016-02-03 16:00,2016-02-08 08:00,2016-02-09 16:00,,PT_Normal,,,,,bHC/NIzadU+KN3zHkYu3Eg,9xVyN3TeSe+1LZkXYr8K6g,,,N,0,0,,,2014-04-05 12:28,2014-04-05 13:21,admin,admin,
2284,142027,1749,36541,642,0,N,N,N,CP_Drtn,TT_Task,DT_FixedDUR2,TK_NotStart,BL3-MEP-FF-10F-3010,Hose reel Cabinet Installation and Connection,,320,216,48,0,192,192,48,1336.852298,0,1336.852298,,,,2016-02-01 08:00,2016-02-06 16:00,,2015-12-23 08:00,2015-12-28 16:00,2015-12-23 08:00,2015-12-28 16:00,2015-12-23 08:00,2015-12-28 16:00,2016-02-01 08:00,2016-02-06 16:00,,PT_Normal,,,,,6VufMVBtWUWXuCs+In7dHQ,KeC40SZ8QpqSwi5NuL+zXQ,,,N,0,0,,,2014-04-05 12:28,2014-04-05 13:21,admin,admin,
2285,142028,1749,36219,642,0,N,N,N,CP_Drtn,TT_Task,DT_FixedDUR2,TK_NotStart,BL3-MEP-EL-10F-1000,PVC Back Boxes and Conduits  Fixing in Wall,,24,0,144,0,384,384,144,3325.67233,0,3325.67233,,,,2015-10-07 08:00,2015-10-24 16:00,,2015-10-04 08:00,2015-10-21 16:00,2015-10-04 08:00,2015-10-21 16:00,2015-10-04 08:00,2015-10-21 16:00,2015-10-07 08:00,2015-10-24 16:00,,PT_Normal,,,,,fa/d4fqPVkaJLlHGsaovsg,l1aH721NTqSv0J4hagJQTA,,,N,0,0,,,2014-04-05 12:28,2014-04-05 13:21,admin,admin,
2286,142029,1749,36219,642,0,N,N,N,CP_Drtn,TT_Task,DT_FixedDUR2,TK_NotStart,BL3-MEP-EL-10F-1010,DB's Inclosure Fixing,4455,64,64,48,0,96,96,48,2136.399392,0,2136.399392,,,,2015-10-20 08:00,2015-10-25 16:00,,2015-10-12 08:00,2015-10-17 16:00,2015-10-12 08:00,2015-10-17 16:00,2015-10-12 08:00,2015-10-17 16:00,2015-10-20 08:00,2015-10-25 16:00,,PT_Normal,,,,,Ia7VzhDZuE+ABUG2mthm7w,96xsu6h9T+uSaVnrV+UztA,,,N,0,0,,,2014-04-05 12:28,2014-04-05 13:21,admin,admin,
2287,142030,1749,36211,642,0,N,N,N,CP_Drtn,TT_Task,DT_FixedDUR2,TK_NotStart,BL3-MEP-EL-10F-2060,SMDB's  Installation,,632,0,48,0,45,45,48,4202.598932,0,4202.598932,,,,2016-01-28 08:00,2016-02-02 16:00,,2015-11-10 08:00,2015-11-15 16:00,2015-11-10 08:00,2015-11-15 16:00,2015-11-10 08:00,2015-11-15 16:00,2016-01-28 08:00,2016-02-02 16:00,,PT_Normal,,,,,HEwVR2psJUaV9cWFa40J+g,zozwv0GHS82Ijhj1M4THQQ,,,N,0,0,,,2014-04-05 12:28,2014-04-05 13:21,admin,admin,
2288,142031,1749,36211,642,0,N,N,N,CP_Drtn,TT_Task,DT_FixedDUR2,TK_NotStart,BL3-MEP-EL-10F-2000,Lighting  Wiring,,352,0,96,0,241.713,241.713,96,3578.08423,0,3578.08423,,,,2015-12-05 08:00,2015-12-16 16:00,,2015-10-22 08:00,2015-11-02 16:00,2015-10-22 08:00,2015-11-02 16:00,2015-10-22 08:00,2015-11-02 16:00,2015-12-05 08:00,2015-12-16 16:00,,PT_Normal,,,,,Ey5LngtoY0CDCFCz5mtD5A,GaTHayjLQJeV6SjorWTQ7A,,,N,0,0,,,2014-04-05 12:28,2014-04-05 13:21,admin,admin,
2289,142032,1749,36211,642,0,N,N,N,CP_Drtn,TT_Task,DT_FixedDUR2,TK_NotStart,BL3-MEP-EL-10F-2010,Power Points Wiring,,352,0,96,0,192,192,96,2906.213289,0,2906.213289,,,,2015-12-05 08:00,2015-12-16 16:00,,2015-10-22 08:00,2015-11-02 16:00,2015-10-22 08:00,2015-11-02 16:00,2015-10-22 08:00,2015-11-02 16:00,2015-12-05 08:00,2015-12-16 16:00,,PT_Normal,,,,,JfEUl0v/HkSVQvPuMR8mTQ,D8x27Y7VRuiHEDnr9TiQVg,,,N,0,0,,,2014-04-05 12:28,2014-04-05 13:21,admin,admin,
2290,142033,1749,36211,642,0,N,N,N,CP_Drtn,TT_Task,DT_FixedDUR2,TK_NotStart,BL3-MEP-EL-10F-2020,Cable Tray and Trunking Installation,,352,184,112,0,336,336,112,9078.448617,0,9078.448617,,,,2015-12-03 08:00,2015-12-16 16:00,,2015-10-20 08:00,2015-11-02 16:00,2015-10-20 08:00,2015-11-02 16:00,2015-10-20 08:00,2015-11-02 16:00,2015-12-03 08:00,2015-12-16 16:00,,PT_Normal,,,,,gaFUnODrGEGLYUG4DbivTQ,hJRs9HryT9+HJPA7XPuwbg,,,N,0,0,,,2014-04-05 12:28,2014-04-05 13:21,admin,admin,
2291,142034,1749,36211,642,0,N,N,N,CP_Drtn,TT_Task,DT_FixedDUR2,TK_NotStart,BL3-MEP-EL-10F-2030,Emergency Light Wiring,,360,360,64,0,128,128,64,1210.028798,0,1210.028798,,,,2015-12-09 08:00,2015-12-16 16:00,,2015-10-25 08:00,2015-11-01 16:00,2015-10-25 08:00,2015-11-01 16:00,2015-10-25 08:00,2015-11-01 16:00,2015-12-09 08:00,2015-12-16 16:00,,PT_Normal,,,,,EUn9kwEmbECnDEdJ9BLyFQ,58Pn3MgJQeSLfzOL9ZrCzA,,,N,0,0,,,2014-04-05 12:28,2014-04-05 13:21,admin,admin,
2292,142035,1749,36211,642,0,N,N,N,CP_Drtn,TT_Task,DT_FixedDUR2,TK_NotStart,BL3-MEP-EL-10F-2040,Fire Alarm System Wiring,,352,0,96,0,192,192,96,7123.009694,0,7123.009694,,,,2015-12-05 08:00,2015-12-16 16:00,,2015-10-22 08:00,2015-11-02 16:00,2015-10-22 08:00,2015-11-02 16:00,2015-10-22 08:00,2015-11-02 16:00,2015-12-05 08:00,2015-12-16 16:00,,PT_Normal,,,,,UqzBOUEBUUO1ZP1LCD3WCg,jJL3d1vKRqWTAWjWIBkzOg,,,N,0,0,,,2014-04-05 12:28,2014-04-05 13:21,admin,admin,
2293,142036,1749,36211,642,0,N,N,N,CP_Drtn,TT_Task,DT_FixedDUR2,TK_NotStart,BL3-MEP-EL-10F-2070,DB's Installation and Termination,4455,184,0,96,0,288,288,96,4982.925025,0,4982.925025,,,,2015-12-05 08:00,2015-12-16 16:00,,2015-11-12 08:00,2015-11-23 16:00,2015-11-12 08:00,2015-11-23 16:00,2015-11-12 08:00,2015-11-23 16:00,2015-12-05 08:00,2015-12-16 16:00,,PT_Normal,,,,,MEYcLmVWWUSvdDjysQmYYA,ScnVqLctRRKEiSw8JEHcBA,,,N,0,0,,,2014-04-05 12:28,2014-04-05 13:21,admin,admin,
2294,142037,1749,36211,642,0,N,N,N,CP_Drtn,TT_Task,DT_FixedDUR2,TK_NotStart,BL3-MEP-EL-10F-2050,Low Current  System Wiring,4455,608,384,112,0,244,244,112,38231.783306,0,38231.783306,,,,2016-01-06 08:00,2016-01-19 16:00,,2015-10-22 08:00,2015-11-04 16:00,2015-10-22 08:00,2015-11-04 16:00,2015-10-22 08:00,2015-11-04 16:00,2016-01-06 08:00,2016-01-19 16:00,,PT_Normal,,,,,evkAmL0HOkWMTAf/g874AQ,ImJSPEBWTZC9NGXS4hMgKQ,,,N,0,0,,,2014-04-05 12:28,2014-04-05 13:21,admin,admin,
2295,142038,1749,36112,642,0,N,N,N,CP_Drtn,TT_Task,DT_FixedDUR2,TK_NotStart,BL3-MEP-EL-10F-3020,Lights Fitting Fixing,,216,0,112,0,244,244,112,7336.659378,0,7336.659378,,,,2016-01-19 08:00,2016-02-01 16:00,,2015-12-23 08:00,2016-01-05 16:00,2015-12-23 08:00,2016-01-05 16:00,2015-12-23 08:00,2016-01-05 16:00,2016-01-19 08:00,2016-02-01 16:00,,PT_Normal,,,,,mmQ+WoXZ40yZwM/vgkwyXA,54ptuGhvTQaTTbniGi64sA,,,N,0,0,,,2014-04-05 12:28,2014-04-05 13:21,admin,admin,
2296,142039,1749,36112,642,0,N,N,N,CP_Drtn,TT_Task,DT_FixedDUR2,TK_NotStart,BL3-MEP-EL-10F-3070,Sockets and Switches Fixing,,312,0,64,0,128,128,64,1174.957134,0,1174.957134,,,,2016-01-31 08:00,2016-02-07 16:00,,2015-12-23 08:00,2015-12-30 16:00,2015-12-23 08:00,2015-12-30 16:00,2015-12-23 08:00,2015-12-30 16:00,2016-01-31 08:00,2016-02-07 16:00,,PT_Normal,,,,,/9ETQippwkGbi3vdwmaCdg,olB0PyvfSdWUn9wtjLbWKA,,,N,0,0,,,2014-04-05 12:28,2014-04-05 13:21,admin,admin,
2297,142040,1749,36112,642,0,N,N,N,CP_Drtn,TT_Task,DT_FixedDUR2,TK_NotStart,BL3-MEP-EL-10F-3030,Emergency Light Fixing,,352,248,64,0,128,128,64,5722.024623,0,5722.024623,,,,2016-02-05 08:00,2016-02-12 16:00,,2015-12-23 08:00,2015-12-30 16:00,2015-12-23 08:00,2015-12-30 16:00,2015-12-23 08:00,2015-12-30 16:00,2016-02-05 08:00,2016-02-12 16:00,,PT_Normal,,,,,vljSMD2qskWBWiYryJcBdA,LMJ1wsC0R/ueUru7j1NA6Q,,,N,0,0,,,2014-04-05 12:28,2014-04-05 13:21,admin,admin,
2298,142041,1749,36112,642,0,N,N,N,CP_Drtn,TT_Task,DT_FixedDUR2,TK_NotStart,BL3-MEP-EL-10F-3040,Fire Alarm System Detector Installation,,248,0,96,0,192,192,96,4046.378277,0,4046.378277,,,,2016-01-23 08:00,2016-02-03 16:00,,2015-12-23 08:00,2016-01-03 16:00,2015-12-23 08:00,2016-01-03 16:00,2015-12-23 08:00,2016-01-03 16:00,2016-01-23 08:00,2016-02-03 16:00,,PT_Normal,,,,,l9HO16WpR0O1w+As5Z07/Q,r30mRYosR5271rcwP7SFpA,,,N,0,0,,,2014-04-05 12:28,2014-04-05 13:21,admin,admin,
2299,142042,1749,36112,642,0,N,N,N,CP_Drtn,TT_Task,DT_FixedDUR2,TK_NotStart,BL3-MEP-EL-10F-3010,SMDB's  Termination and Final Connection,,336,0,48,0,192,192,48,2791.825001,0,2791.825001,,,,2016-02-03 08:00,2016-02-08 16:00,,2015-12-23 08:00,2015-12-28 16:00,2015-12-23 08:00,2015-12-28 16:00,2015-12-23 08:00,2015-12-28 16:00,2016-02-03 08:00,2016-02-08 16:00,,PT_Normal,,,,,/qGeut9ilke5G6HuCQ5WwA,sclV2KNTSr+vmR0Ctgze3w,,,N,0,0,,,2014-04-05 12:28,2014-04-05 13:21,admin,admin,
2300,142043,1749,36211,642,0,N,N,N,CP_Drtn,TT_Task,DT_FixedDUR2,TK_NotStart,BL3-MEP-EL-10F-3000,Power Cable Puling,,384,24,112,0,168,168,112,6375.759893,0,6375.759893,,,,2016-01-13 08:00,2016-01-26 16:00,,2015-11-26 08:00,2015-12-09 16:00,2015-11-26 08:00,2015-12-09 16:00,2015-11-26 08:00,2015-12-09 16:00,2016-01-13 08:00,2016-01-26 16:00,,PT_Normal,,,,,u9sFEjOQgUi/Z2NIq5oISg,ZXXuvotCTaaTNi5LFsT+Sw,,,N,0,0,,,2014-04-05 12:28,2014-04-05 13:21,admin,admin,
2301,142044,1749,36112,642,0,N,N,N,CP_Drtn,TT_Task,DT_FixedDUR2,TK_NotStart,BL3-MEP-EL-10F-3050,Despature for Low Current  System Installation,4455,224,0,112,0,336,336,112,72752.164276,0,72752.164276,,,,2016-01-20 08:00,2016-02-02 16:00,,2015-12-23 08:00,2016-01-05 16:00,2015-12-23 08:00,2016-01-05 16:00,2015-12-23 08:00,2016-01-05 16:00,2016-01-20 08:00,2016-02-02 16:00,,PT_Normal,,,,,YJvBixhH40eDOagX3e1aQg,IlUTm8EdT9CoeRT1ytGLUQ,,,N,0,0,,,2014-04-05 12:28,2014-04-05 13:21,admin,admin,
2302,142045,1749,36112,642,0,N,N,N,CP_Drtn,TT_Task,DT_FixedDUR2,TK_NotStart,BL3-MEP-EL-10F-3060,Low Current  System Outlet installation and Connection,4455,224,120,80,0,80,80,80,3870.787498,0,3870.787498,,,,2016-02-03 08:00,2016-02-12 16:00,,2016-01-06 08:00,2016-01-15 16:00,2016-01-06 08:00,2016-01-15 16:00,2016-01-06 08:00,2016-01-15 16:00,2016-02-03 08:00,2016-02-12 16:00,,PT_Normal,,,,,J5p+ioiK5UaghWBTLO+blA,SajeFLh2SgqxYPfqaGCVTg,,,N,0,0,,,2014-04-05 12:28,2014-04-05 13:21,admin,admin,
2303,142046,1749,36583,642,0,N,N,N,CP_Drtn,TT_Task,DT_FixedDUR2,TK_NotStart,BL3-MEP-AC-11F-1010,Supports and Hungers Fixing,,0,0,96,0,192,192,96,991.381104,0,991.381104,,,,2015-12-10 08:00,2015-12-21 16:00,,2015-12-10 08:00,2015-12-21 16:00,2015-12-10 08:00,2015-12-21 16:00,2015-12-10 08:00,2015-12-21 16:00,2015-12-10 08:00,2015-12-21 16:00,,PT_Normal,,,,,9OMUKVLCwUGW2toEHD4/Yw,OiAXnmQCTIWXAv46XLwQqg,,,Y,0,0,,,2014-04-05 12:28,2014-04-05 13:21,admin,admin,
2304,142047,1749,36583,642,0,N,N,N,CP_Drtn,TT_FinMile,DT_FixedDrtn,TK_NotStart,BL3-MEP-AC-11F-1000,Foundation for MEP Equipments ready,,0,0,0,0,0,0,0,0,0,0,,,,2015-12-09 16:00,2015-12-09 16:00,,2015-12-09 16:00,2015-12-09 16:00,2015-12-09 16:00,2015-12-09 16:00,2015-12-09 16:00,2015-12-09 16:00,2015-12-09 16:00,2015-12-09 16:00,,PT_Normal,,,,,ldQNcWQJFUSaIOD6IW1nEg,3xiTZO9aQQCXABxxZlM+mA,,,Y,0,0,,,2014-04-05 12:28,2014-04-05 12:28,admin,admin,
2305,142048,1749,36584,642,0,N,N,N,CP_Drtn,TT_Task,DT_FixedDUR2,TK_NotStart,BL3-MEP-AC-11F-2050,Duct Installation and Insulation,4454,16,0,240,0,960,960,240,5579.653981,0,5579.653981,,,,2016-01-14 08:00,2016-02-12 16:00,,2016-01-12 08:00,2016-02-10 16:00,2016-01-12 08:00,2016-02-10 16:00,2016-01-12 08:00,2016-02-10 16:00,2016-01-14 08:00,2016-02-12 16:00,,PT_Normal,,,,,t5qYK1NkNkmqbohLNUPD+Q,8H3j6eB0Qg6eczTIIXQz0Q,,,N,0,0,,,2014-04-05 12:28,2014-04-05 13:21,admin,admin,
2306,142049,1749,36584,642,0,N,N,N,CP_Drtn,TT_Task,DT_FixedDUR2,TK_NotStart,BL3-MEP-AC-11F-2100,Extract and Fresh Fan's Installation,4457,16,0,200,0,800,800,200,192970.871167,0,192970.871167,,,,2016-02-06 08:00,2016-03-01 16:00,,2016-02-04 08:00,2016-02-28 16:00,2016-02-04 08:00,2016-02-28 16:00,2016-02-04 08:00,2016-02-28 16:00,2016-02-06 08:00,2016-03-01 16:00,,PT_Normal,,,,,2wSwZoSofki18kx6bG0KyA,jemBt7bqSA+kdbJE5BD2rA,,,N,0,0,,,2014-04-05 12:28,2014-04-05 13:21,admin,admin,
2307,142050,1749,36584,642,0,N,N,N,CP_Drtn,TT_Task,DT_FixedDUR2,TK_NotStart,BL3-MEP-AC-11F-2000,Heat Pumps Installation,4457,32,32,168,0,252,252,168,418137.936401,0,418137.936401,,,,2015-12-26 08:00,2016-01-15 16:00,,2015-12-22 08:00,2016-01-11 16:00,2015-12-22 08:00,2016-01-11 16:00,2015-12-22 08:00,2016-01-11 16:00,2015-12-26 08:00,2016-01-15 16:00,,PT_Normal,,,,,7VZQ4KtMBUu7f9SrJH+DYQ,YQKlUzMQQ3uvvVZFUOH6TA,,,N,0,0,,,2014-04-05 12:28,2014-04-05 13:21,admin,admin,
2308,142051,1749,36584,642,0,N,N,N,CP_Drtn,TT_Task,DT_FixedDUR2,TK_NotStart,BL3-MEP-AC-11F-2010,Chilled Water Pipes and Fittings Installation and Final Connection,4457,0,0,240,0,480,480,240,14894.751805,0,14894.751805,,,,2015-12-24 08:00,2016-01-22 16:00,,2015-12-24 08:00,2016-01-22 16:00,2015-12-24 08:00,2016-01-22 16:00,2015-12-24 08:00,2016-01-22 16:00,2015-12-24 08:00,2016-01-22 16:00,,PT_Normal,,,,,xxEAWNhFIUWVE01u6DdFvg,Hl2tdZXJRZiVZW5H/9itXg,,,Y,0,0,,,2014-04-05 12:28,2014-04-05 13:21,admin,admin,
2309,142052,1749,36584,642,0,N,N,N,CP_Drtn,TT_Task,DT_FixedDUR2,TK_NotStart,BL3-MEP-AC-11F-2070,Chilled Water Pipes Pressure Test,4457,0,0,48,0,48,48,48,1657.634495,0,1657.634495,,,,2016-01-23 08:00,2016-01-28 16:00,,2016-01-23 08:00,2016-01-28 16:00,2016-01-23 08:00,2016-01-28 16:00,2016-01-23 08:00,2016-01-28 16:00,2016-01-23 08:00,2016-01-28 16:00,,PT_Normal,,,,,05+/kvHkqU2gRhY9JuI74A,HdrfTsziSCagCyNGGL76yQ,,,Y,0,0,,,2014-04-05 12:28,2014-04-05 13:21,admin,admin,
2310,142053,1749,36584,642,0,N,N,N,CP_Drtn,TT_Task,DT_FixedDUR2,TK_NotStart,BL3-MEP-AC-11F-2080,Chilled Water Pipes Insulation,4457,120,104,144,0,288,288,144,4735.505642,0,4735.505642,,,,2016-02-13 08:00,2016-03-01 16:00,,2016-01-29 08:00,2016-02-15 16:00,2016-01-29 08:00,2016-02-15 16:00,2016-01-29 08:00,2016-02-15 16:00,2016-02-13 08:00,2016-03-01 16:00,,PT_Normal,,,,,cIUT/PYmKkG/r+iW/UkTaQ,AQ38EF4CSreiagitgRbryA,,,N,0,0,,,2014-04-05 12:28,2014-04-05 13:21,admin,admin,
2311,142054,1749,36584,642,0,N,N,N,CP_Drtn,TT_Task,DT_FixedDUR2,TK_NotStart,BL3-MEP-AC-11F-2090,Chilled Water Pumps Installation and Final Connection,4457,0,0,168,0,252,252,168,199000.64434,0,199000.64434,,,,2016-01-29 08:00,2016-02-18 16:00,,2016-01-29 08:00,2016-02-18 16:00,2016-01-29 08:00,2016-02-18 16:00,2016-01-29 08:00,2016-02-18 16:00,2016-01-29 08:00,2016-02-18 16:00,,PT_Normal,,,,,P7ssnZv5bkqL9mgX10e2fA,LUs7UJE6SSW3H3gCyAlBVg,,,Y,0,0,,,2014-04-05 12:28,2014-04-05 13:21,admin,admin,
2312,142055,1749,36584,642,0,N,N,N,CP_Drtn,TT_Task,DT_FixedDUR2,TK_NotStart,BL3-MEP-AC-11F-2020,AHU's Installation,4457,0,0,168,0,252,252,168,223080.219815,0,223080.219815,,,,2015-12-22 08:00,2016-01-11 16:00,,2015-12-22 08:00,2016-01-11 16:00,2015-12-22 08:00,2016-01-11 16:00,2015-12-22 08:00,2016-01-11 16:00,2015-12-22 08:00,2016-01-11 16:00,,PT_Normal,,,,,MtcQ16oxGkCffT7oAuMpIQ,PoRho2hKQdeAQh35rgpz4g,,,Y,0,0,,,2014-04-05 12:28,2014-04-05 13:21,admin,admin,
2313,142056,1749,36584,642,0,N,N,N,CP_Drtn,TT_Task,DT_FixedDUR2,TK_NotStart,BL3-MEP-AC-11F-2030,Pressurization Units Installation,4457,16,0,168,0,252,252,168,14039.948981,0,14039.948981,,,,2015-12-24 08:00,2016-01-13 16:00,,2015-12-22 08:00,2016-01-11 16:00,2015-12-22 08:00,2016-01-11 16:00,2015-12-22 08:00,2016-01-11 16:00,2015-12-24 08:00,2016-01-13 16:00,,PT_Normal,,,,,hzPlzHVsWk+x3udSvrcOig,n2hc2QHnTh2xmS1PgkAKKA,,,N,0,0,,,2014-04-05 12:28,2014-04-05 13:21,admin,admin,
2314,142057,1749,36584,642,0,N,N,N,CP_Drtn,TT_Task,DT_FixedDUR2,TK_NotStart,BL3-MEP-AC-11F-2040,Chemical Treatment Unit Installation,4457,288,288,112,0,168,168,112,65831.986601,0,65831.986601,,,,2016-01-27 08:00,2016-02-09 16:00,,2015-12-22 08:00,2016-01-04 16:00,2015-12-22 08:00,2016-01-04 16:00,2015-12-22 08:00,2016-01-04 16:00,2016-01-27 08:00,2016-02-09 16:00,,PT_Normal,,,,,s3XBCCysF0uVR4ePFLKZqQ,I7qMcqp4SUSilHEkPs2leA,,,N,0,0,,,2014-04-05 12:28,2014-04-05 13:21,admin,admin,
2315,142058,1749,36584,642,0,N,N,N,CP_Drtn,TT_Task,DT_FixedDUR2,TK_NotStart,BL3-MEP-AC-11F-2060,BTU Meter Installation,4457,184,184,48,0,48,48,48,26518.544194,0,26518.544194,,,,2016-02-04 08:00,2016-02-09 16:00,,2016-01-12 08:00,2016-01-17 16:00,2016-01-12 08:00,2016-01-17 16:00,2016-01-12 08:00,2016-01-17 16:00,2016-02-04 08:00,2016-02-09 16:00,,PT_Normal,,,,,rtxdALI9f0edkwmanOKaFA,jDix8BuGSdqg2MTjZS5f6Q,,,N,0,0,,,2014-04-05 12:28,2014-04-05 13:21,admin,admin,
2316,142059,1749,36377,642,0,N,N,N,CP_Drtn,TT_Task,DT_FixedDUR2,TK_NotStart,BL3-MEP-PL-11F-3010,Vent Pipes Installation,,272,0,112,0,383.862,383.862,112,985.628747,0,985.628747,,,,2016-01-16 08:00,2016-01-29 16:00,,2015-12-13 08:00,2015-12-26 16:00,2015-12-13 08:00,2015-12-26 16:00,2015-12-13 08:00,2015-12-26 16:00,2016-01-16 08:00,2016-01-29 16:00,,PT_Normal,,,,,+eB2B9AQ/UmSLKk1GMJflA,BZD+roqnTE2P+uJ7lpSPnQ,,,N,0,0,,,2014-04-05 12:28,2014-04-05 13:21,admin,admin,
2317,142060,1749,36377,642,0,N,N,N,CP_Drtn,TT_Task,DT_FixedDUR2,TK_NotStart,BL3-MEP-PL-11F-3020,Rain Outlet Installation,,272,184,48,0,36.45,36.45,48,450.468469,0,450.468469,,,,2016-01-30 08:00,2016-02-04 16:00,,2015-12-27 08:00,2016-01-01 16:00,2015-12-27 08:00,2016-01-01 16:00,2015-12-27 08:00,2016-01-01 16:00,2016-01-30 08:00,2016-02-04 16:00,,PT_Normal,,,,,xEpoDlRLoECKrcEmXFZEgA,Ii/qy8iVTn2tS7dyLoTlYQ,,,N,0,0,,,2014-04-05 12:28,2014-04-05 13:21,admin,admin,
2318,142061,1749,36377,642,0,N,N,N,CP_Drtn,TT_Task,DT_FixedDUR2,TK_NotStart,BL3-MEP-PL-11F-3000,Pip Tap Fixing,4456,272,0,32,0,8,8,32,128.037712,0,128.037712,,,,2016-01-12 08:00,2016-01-15 16:00,,2015-12-09 08:00,2015-12-12 16:00,2015-12-09 08:00,2015-12-12 16:00,2015-12-09 08:00,2015-12-12 16:00,2016-01-12 08:00,2016-01-15 16:00,,PT_Normal,,,,,YXZe4iOJJkmjwUOQ9J3uDQ,F0tU8SyXQaKN1xYFMn9fTA,,,N,0,0,,,2014-04-05 12:28,2014-04-05 13:21,admin,admin,
2319,142062,1749,36379,642,0,N,N,N,CP_Drtn,TT_Task,DT_FixedDUR2,TK_NotStart,BL3-MEP-FF-11F-3000,Fire Extinguisher Installation,,48,0,16,0,8,8,16,1076.993507,0,1076.993507,,,,2016-02-10 08:00,2016-02-11 16:00,,2016-02-04 08:00,2016-02-05 16:00,2016-02-04 08:00,2016-02-05 16:00,2016-02-04 08:00,2016-02-05 16:00,2016-02-10 08:00,2016-02-11 16:00,,PT_Normal,,,,,z6tETPi+rUS77QGYIfCJbA,IzHxkOZNQY2/Jmb2k1Dz7w,,,N,0,0,,,2014-04-05 12:28,2014-04-05 13:21,admin,admin,
2320,142063,1749,36282,642,0,N,N,N,CP_Drtn,TT_Task,DT_FixedDUR2,TK_NotStart,BL3-MEP-EL-11F-1000,PVC Back Boxes and Conduits  Fixing in Wall,,24,0,96,0,384,384,96,3319.67233,0,3319.67233,,,,2015-10-25 08:00,2015-11-05 16:00,,2015-10-22 08:00,2015-11-02 16:00,2015-10-22 08:00,2015-11-02 16:00,2015-10-22 08:00,2015-11-02 16:00,2015-10-25 08:00,2015-11-05 16:00,,PT_Normal,,,,,kqNA29cpIkyAGLVFveJ+QQ,/G0y9wfKRian2KOemaUkdg,,,N,0,0,,,2014-04-05 12:28,2014-04-05 13:21,admin,admin,
2321,142064,1749,36113,642,0,N,N,N,CP_Drtn,TT_Task,DT_FixedDUR2,TK_NotStart,BL3-MEP-EL-11F-2010,SMDB's  Installation,,640,296,48,0,45,45,48,4202.598932,0,4202.598932,,,,2016-02-04 08:00,2016-02-09 16:00,,2015-11-16 08:00,2015-11-21 16:00,2015-11-16 08:00,2015-11-21 16:00,2015-11-16 08:00,2015-11-21 16:00,2016-02-04 08:00,2016-02-09 16:00,,PT_Normal,,,,,kwHbExsVy0iqUu4QonvcfQ,tQuGKTxISL+4pZQufRQyNQ,,,N,0,0,,,2014-04-05 12:28,2014-04-05 13:21,admin,admin,
2322,142065,1749,36113,642,0,N,N,N,CP_Drtn,TT_Task,DT_FixedDUR2,TK_NotStart,BL3-MEP-EL-11F-2020,Lighting  Wiring,,584,192,96,0,241.713,241.713,96,3578.08423,0,3578.08423,,,,2016-01-15 08:00,2016-01-26 16:00,,2015-11-03 08:00,2015-11-14 16:00,2015-11-03 08:00,2015-11-14 16:00,2015-11-03 08:00,2015-11-14 16:00,2016-01-15 08:00,2016-01-26 16:00,,PT_Normal,,,,,V8lt//yt10+uuyIRzT4LVg,2sNtKolKTVKp8KfOxejo8Q,,,N,0,0,,,2014-04-05 12:28,2014-04-05 13:21,admin,admin,
2323,142066,1749,36113,642,0,N,N,N,CP_Drtn,TT_Task,DT_FixedDUR2,TK_NotStart,BL3-MEP-EL-11F-2030,Power Points Wiring,,584,224,96,0,192,192,96,2906.213289,0,2906.213289,,,,2016-01-15 08:00,2016-01-26 16:00,,2015-11-03 08:00,2015-11-14 16:00,2015-11-03 08:00,2015-11-14 16:00,2015-11-03 08:00,2015-11-14 16:00,2016-01-15 08:00,2016-01-26 16:00,,PT_Normal,,,,,HtoJlZ1Id0a2U6LOraEdcg,XHJjIZz7Qze0Wagm1s7keg,,,N,0,0,,,2014-04-05 12:28,2014-04-05 13:21,admin,admin,
2324,142067,1749,36113,642,0,N,N,N,CP_Drtn,TT_Task,DT_FixedDUR2,TK_NotStart,BL3-MEP-EL-11F-2050,Cable Tray and Trunking Installation,,360,0,112,0,336,336,112,9078.448617,0,9078.448617,,,,2016-01-13 08:00,2016-01-26 16:00,,2015-11-29 08:00,2015-12-12 16:00,2015-11-29 08:00,2015-12-12 16:00,2015-11-29 08:00,2015-12-12 16:00,2016-01-13 08:00,2016-01-26 16:00,,PT_Normal,,,,,Z7Eva16S80+QMdQz+mJK6w,L+J9+DhrTIOZP/5NN7VPOA,,,N,0,0,,,2014-04-05 12:28,2014-04-05 13:21,admin,admin,
2325,142068,1749,36113,642,0,N,N,N,CP_Drtn,TT_Task,DT_FixedDUR2,TK_NotStart,BL3-MEP-EL-11F-2040,Fire Alarm System Wiring,,648,400,96,0,192,192,96,7123.009694,0,7123.009694,,,,2016-01-23 08:00,2016-02-03 16:00,,2015-11-03 08:00,2015-11-14 16:00,2015-11-03 08:00,2015-11-14 16:00,2015-11-03 08:00,2015-11-14 16:00,2016-01-23 08:00,2016-02-03 16:00,,PT_Normal,,,,,VaF1R1ISM0G7jvzb6TF0dA,pEwoQoduTgOCgOtSv74AjA,,,N,0,0,,,2014-04-05 12:28,2014-04-05 13:21,admin,admin,
2326,142069,1749,36113,642,0,N,N,N,CP_Drtn,TT_Task,DT_FixedDUR2,TK_NotStart,BL3-MEP-EL-11F-2000,Lighting Protection,4455,688,216,40,0,160,160,40,46.345904,0,46.345904,,,,2016-02-01 08:00,2016-02-05 16:00,,2015-11-07 08:00,2015-11-11 16:00,2015-11-07 08:00,2015-11-11 16:00,2015-11-07 08:00,2015-11-11 16:00,2016-02-01 08:00,2016-02-05 16:00,,PT_Normal,,,,,XYS6TO3xV0eQgXOOW+ug/A,mwEGwUbqTmiMdyXZ6b7Wqg,,,N,0,0,,,2014-04-05 12:28,2014-04-05 13:21,admin,admin,
2327,142070,1749,36183,642,0,N,N,N,CP_Drtn,TT_Task,DT_FixedDUR2,TK_NotStart,BL3-MEP-EL-11F-3000,Lights Fitting Fixing,,216,0,112,0,244,244,112,7336.659378,0,7336.659378,,,,2016-02-02 08:00,2016-02-15 16:00,,2016-01-06 08:00,2016-01-19 16:00,2016-01-06 08:00,2016-01-19 16:00,2016-01-06 08:00,2016-01-19 16:00,2016-02-02 08:00,2016-02-15 16:00,,PT_Normal,,,,,06NtqkiK00uI45moI2BSgg,3e2eFw52TPqCy9eQmrTThQ,,,N,0,0,,,2014-04-05 12:28,2014-04-05 13:21,admin,admin,
2328,142071,1749,36183,642,0,N,N,N,CP_Drtn,TT_Task,DT_FixedDUR2,TK_NotStart,BL3-MEP-EL-11F-3050,Sockets and Switches Fixing,,312,96,64,0,128,128,64,1174.957134,0,1174.957134,,,,2016-02-08 08:00,2016-02-15 16:00,,2015-12-31 08:00,2016-01-07 16:00,2015-12-31 08:00,2016-01-07 16:00,2015-12-31 08:00,2016-01-07 16:00,2016-02-08 08:00,2016-02-15 16:00,,PT_Normal,,,,,uHjjt1jBbk6oMdC7aG5UJA,fBDZ1+UeSdyI/CX2giaR5g,,,N,0,0,,,2014-04-05 12:28,2014-04-05 13:21,admin,admin,
2329,142072,1749,36183,642,0,N,N,N,CP_Drtn,TT_Task,DT_FixedDUR2,TK_NotStart,BL3-MEP-EL-11F-3010,Fire Alarm System Detector Installation,,248,32,96,0,192,192,96,4046.378277,0,4046.378277,,,,2016-02-04 08:00,2016-02-15 16:00,,2016-01-04 08:00,2016-01-15 16:00,2016-01-04 08:00,2016-01-15 16:00,2016-01-04 08:00,2016-01-15 16:00,2016-02-04 08:00,2016-02-15 16:00,,PT_Normal,,,,,tNVC2tmDV0G131SUyi9LzA,4NdYz6BTQmeIXvsApKi1Hw,,,N,0,0,,,2014-04-05 12:28,2014-04-05 13:21,admin,admin,
2330,142073,1749,36183,642,0,N,N,N,CP_Drtn,TT_Task,DT_FixedDUR2,TK_NotStart,BL3-MEP-EL-11F-3040,SMDB's  Termination and Final Connection,,344,128,48,0,192,192,48,2791.825001,0,2791.825001,,,,2016-02-10 08:00,2016-02-15 16:00,,2015-12-29 08:00,2016-01-03 16:00,2015-12-29 08:00,2016-01-03 16:00,2015-12-29 08:00,2016-01-03 16:00,2016-02-10 08:00,2016-02-15 16:00,,PT_Normal,,,,,22Y8+4W58USV5FXxHTN1iw,mukuTp+eRF6I34VrYcqFPA,,,N,0,0,,,2014-04-05 12:28,2014-04-05 13:21,admin,admin,
2331,142074,1749,36183,642,0,N,N,N,CP_Drtn,TT_Task,DT_FixedDUR2,TK_NotStart,BL3-MEP-EL-11F-3030,Power Cable Puling,,360,16,112,0,168,168,112,6375.759893,0,6375.759893,,,,2016-01-27 08:00,2016-02-09 16:00,,2015-12-13 08:00,2015-12-26 16:00,2015-12-13 08:00,2015-12-26 16:00,2015-12-13 08:00,2015-12-26 16:00,2016-01-27 08:00,2016-02-09 16:00,,PT_Normal,,,,,ysHtw86/DkeL8nZUEf7g9w,nHwymGiCRzqvNlknP6fgQg,,,N,0,0,,,2014-04-05 12:28,2014-04-05 13:21,admin,admin,
2332,142075,1749,36183,642,0,N,N,N,CP_Drtn,TT_Task,DT_FixedDUR2,TK_NotStart,BL3-MEP-EL-11F-3060,Equipments Panels Installation and Termination,4455,0,0,168,0,1008,1008,168,133402.638622,0,133402.638622,,,,2016-02-10 08:00,2016-03-01 16:00,,2016-02-10 08:00,2016-03-01 16:00,2016-02-10 08:00,2016-03-01 16:00,2016-02-10 08:00,2016-03-01 16:00,2016-02-10 08:00,2016-03-01 16:00,,PT_Normal,,,,,1vLEr5sUMkex3UsY8RD3qw,Ksk73GKUTjajtlzm00IkEw,,,Y,0,0,,,2014-04-05 12:28,2014-04-05 13:21,admin,admin,
2333,142076,1749,36183,642,0,N,N,N,CP_Drtn,TT_Task,DT_FixedDUR2,TK_NotStart,BL3-MEP-EL-11F-3020,Air Craft Lights Installation,4455,472,256,80,0,160,160,80,92.691808,0,92.691808,,,,2016-02-06 08:00,2016-02-15 16:00,,2015-12-09 08:00,2015-12-18 16:00,2015-12-09 08:00,2015-12-18 16:00,2015-12-09 08:00,2015-12-18 16:00,2016-02-06 08:00,2016-02-15 16:00,,PT_Normal,,,,,y4ZA6Vn51kClQf1PJmEx+Q,WRKAcbj7Sty7XHZFtK5QMQ,,,N,0,0,,,2014-04-05 12:28,2014-04-05 13:21,admin,admin,
2334,142077,1749,35611,642,0,N,N,N,CP_Drtn,TT_Task,DT_FixedDUR2,TK_NotStart,BL3-MEP-RZR-100,Drainage Riser and Final Connection,4456,512,0,240,0,960,960,240,10232.101842,0,10232.101842,,,,2015-12-29 08:00,2016-01-27 16:00,,2015-10-26 08:00,2015-11-24 16:00,2015-10-26 08:00,2015-11-24 16:00,2015-10-26 08:00,2015-11-24 16:00,2015-12-29 08:00,2016-01-27 16:00,,PT_Normal,,,,,CO+2uyoNuUizU7sxZWm/VA,ASm9lZyBpkS1Q7gMozVxMw,,,N,0,0,,,2014-04-05 12:28,2014-04-05 13:21,admin,admin,
2335,142078,1749,35611,642,0,N,N,N,CP_Drtn,TT_Task,DT_FixedDUR2,TK_NotStart,BL3-MEP-RZR-130,Chilled Water Pipes Riser and Final Connection,4457,512,456,240,0,672,672,240,26336.331497,0,26336.331497,,,,2016-01-28 08:00,2016-02-26 16:00,,2015-11-25 08:00,2015-12-24 16:00,2015-11-25 08:00,2015-12-24 16:00,2015-11-25 08:00,2015-12-24 16:00,2016-01-28 08:00,2016-02-26 16:00,,PT_Normal,,,,,E/7WqBYwiUukWfAoAcVIFg,DjK+yBVP7k2rTpVQKAtIPg,,,N,0,0,,,2014-04-05 12:28,2014-04-05 13:21,admin,admin,
2336,142079,1749,35611,642,0,N,N,N,CP_Drtn,TT_Task,DT_FixedDUR2,TK_NotStart,BL3-MEP-RZR-140,Fire Fighting Pipes Riser and Final Connection,4456,48,0,240,0,960,960,240,26088.256073,0,26088.256073,,,,2015-11-01 08:00,2015-11-30 16:00,,2015-10-26 08:00,2015-11-24 16:00,2015-10-26 08:00,2015-11-24 16:00,2015-10-26 08:00,2015-11-24 16:00,2015-11-01 08:00,2015-11-30 16:00,,PT_Normal,,,,,J9Pq8bwpDUmvojHKPzC1/g,7r8ejOli50K4pve/nl9X4w,,,N,0,0,,,2014-04-05 12:28,2014-04-05 13:21,admin,admin,
2337,142080,1749,35611,642,0,N,N,N,CP_Drtn,TT_Task,DT_FixedDUR2,TK_NotStart,BL3-MEP-RZR-110,Water Supply Pipes Riser and Final Connection,4456,536,536,240,0,960,960,240,8857.35053,0,8857.35053,,,,2016-01-01 08:00,2016-01-30 16:00,,2015-10-26 08:00,2015-11-24 16:00,2015-10-26 08:00,2015-11-24 16:00,2015-10-26 08:00,2015-11-24 16:00,2016-01-01 08:00,2016-01-30 16:00,,PT_Normal,,,,,QuhIRpzZs0O6K5xJHBDGkw,zzAs0UeqjkupTha8jRGtsA,,,N,0,0,,,2014-04-05 12:28,2014-04-05 13:21,admin,admin,
2338,142081,1749,35611,642,0,N,N,N,CP_Drtn,TT_Task,DT_FixedDUR2,TK_NotStart,BL3-MEP-RZR-120,Duct Riser Including Connection,4454,856,840,168,0,672,672,168,35552.636355,0,35552.636355,,,,2016-02-10 08:00,2016-03-01 16:00,,2015-10-26 08:00,2015-11-15 16:00,2015-10-26 08:00,2015-11-15 16:00,2015-10-26 08:00,2015-11-15 16:00,2016-02-10 08:00,2016-03-01 16:00,,PT_Normal,,,,,XjDhjABDS0uOMYYzdMLeKw,jyq7SvEGN06+IqgEIYTm1Q,,,N,0,0,,,2014-04-05 12:28,2014-04-05 13:21,admin,admin,
2339,142082,1749,35879,642,0,N,N,N,CP_Drtn,TT_Task,DT_FixedDUR2,TK_NotStart,BL3-XE-NRTH-10,Stone Fixation,4433,648,0,240,0,8024,8024,240,180489,0,180489,,,,2015-12-03 08:00,2016-01-01 16:00,,2015-09-13 08:00,2015-10-12 16:00,2015-09-13 08:00,2015-10-12 16:00,2015-09-13 08:00,2015-10-12 16:00,2015-12-03 08:00,2016-01-01 16:00,,PT_Normal,,,,,nzpJ3RRjlUulD4oJuTybag,zms4A1BRTJKIsbBSVvHxyw,,,N,0,0,,,2014-04-05 12:28,2014-04-05 13:21,admin,admin,
2340,142083,1749,35879,642,0,N,N,N,CP_Drtn,TT_Task,DT_FixedDUR2,TK_NotStart,BL3-XE-NRTH-20,Aluminum Glazing,4433,648,0,240,0,4702.2,4702.2,240,265176.7,0,265176.7,,,,2015-12-03 08:00,2016-01-01 16:00,,2015-09-13 08:00,2015-10-12 16:00,2015-09-13 08:00,2015-10-12 16:00,2015-09-13 08:00,2015-10-12 16:00,2015-12-03 08:00,2016-01-01 16:00,,PT_Normal,,,,,N0s2qccarkG03oS9WAUCqQ,jPQ1sRlSRsym5bU6fmIfJw,,,N,0,0,,,2014-04-05 12:28,2014-04-05 13:21,admin,admin,
2341,142084,1749,35721,642,0,N,N,N,CP_Drtn,TT_Task,DT_FixedDUR2,TK_NotStart,BL3-XE-SOTH-10,Stone Fixation,4433,648,0,240,0,8024,8024,240,180489,0,180489,,,,2016-01-02 08:00,2016-01-31 16:00,,2015-10-13 08:00,2015-11-11 16:00,2015-10-13 08:00,2015-11-11 16:00,2015-10-13 08:00,2015-11-11 16:00,2016-01-02 08:00,2016-01-31 16:00,,PT_Normal,,,,,ApOcviCr9EiZHkvCo4c7tQ,M3U40Z0HRl6l7zR0Am8s0Q,,,N,0,0,,,2014-04-05 12:28,2014-04-05 13:21,admin,admin,
2342,142085,1749,35721,642,0,N,N,N,CP_Drtn,TT_Task,DT_FixedDUR2,TK_NotStart,BL3-XE-SOTH-20,Aluminum Glazing,4433,648,0,240,0,4702.2,4702.2,240,265176.7,0,265176.7,,,,2016-01-02 08:00,2016-01-31 16:00,,2015-10-13 08:00,2015-11-11 16:00,2015-10-13 08:00,2015-11-11 16:00,2015-10-13 08:00,2015-11-11 16:00,2016-01-02 08:00,2016-01-31 16:00,,PT_Normal,,,,,GHuK1Dxh3UOHFw8i9wUIDA,wIcRie5ERTy7ZVmplCHkRw,,,N,0,0,,,2014-04-05 12:28,2014-04-05 13:21,admin,admin,
2343,142086,1749,35763,642,0,N,N,N,CP_Drtn,TT_Task,DT_FixedDUR2,TK_NotStart,BL3-XE-WEST-10,Stone Fixation,4433,648,0,240,0,17846.73,17846.73,240,401403,0,401403,,,,2016-02-01 08:00,2016-03-01 16:00,,2015-11-12 08:00,2015-12-11 16:00,2015-11-12 08:00,2015-12-11 16:00,2015-11-12 08:00,2015-12-11 16:00,2016-02-01 08:00,2016-03-01 16:00,,PT_Normal,,,,,c91LiCcG+US3UFU8x5QECA,uZfyNcrUSU2hrcF/18zddQ,,,N,0,0,,,2014-04-05 12:28,2014-04-05 13:21,admin,admin,
2344,142087,1749,35763,642,0,N,N,N,CP_Drtn,TT_Task,DT_FixedDUR2,TK_NotStart,BL3-XE-WEST-20,Aluminum Glazing,4433,648,0,240,0,10971.8,10971.8,240,618705.7,0,618705.7,,,,2016-02-01 08:00,2016-03-01 16:00,,2015-11-12 08:00,2015-12-11 16:00,2015-11-12 08:00,2015-12-11 16:00,2015-11-12 08:00,2015-12-11 16:00,2016-02-01 08:00,2016-03-01 16:00,,PT_Normal,,,,,qYUU25yNBkCxaTYB6DWgAg,BVRfs//5QI+mo8fa27QBKA,,,N,0,0,,,2014-04-05 12:28,2014-04-05 13:21,admin,admin,
2345,142088,1749,35872,642,0,N,N,N,CP_Drtn,TT_Task,DT_FixedDUR2,TK_NotStart,BL3-XE-EAST-10,Stone Fixation,4433,648,648,240,0,18043.4,18043.4,240,405826.6,0,405826.6,,,,2016-03-02 08:00,2016-03-31 16:00,,2015-12-12 08:00,2016-01-10 16:00,2015-12-12 08:00,2016-01-10 16:00,2015-12-12 08:00,2016-01-10 16:00,2016-03-02 08:00,2016-03-31 16:00,,PT_Normal,,,,,TFuIp9CQ+EWziJFfa+qGNg,RHYdwk1OQqyNfIPQY6KKIQ,,,N,0,0,,,2014-04-05 12:28,2014-04-05 13:21,admin,admin,
2346,142089,1749,35872,642,0,N,N,N,CP_Drtn,TT_Task,DT_FixedDUR2,TK_NotStart,BL3-XE-EAST-20,Aluminum Glazing,4433,648,648,240,0,10971.8,10971.8,240,618705.7,0,618705.7,,,,2016-03-02 08:00,2016-03-31 16:00,,2015-12-12 08:00,2016-01-10 16:00,2015-12-12 08:00,2016-01-10 16:00,2015-12-12 08:00,2016-01-10 16:00,2016-03-02 08:00,2016-03-31 16:00,,PT_Normal,,,,,jJ9Vg8eOoUm+WddlEDAHDA,+71cTfdSQvu5dvDcZIPJGg,,,N,0,0,,,2014-04-05 12:28,2014-04-05 13:21,admin,admin,
2347,142090,1749,35867,642,0,N,N,N,CP_Drtn,TT_Task,DT_FixedDUR2,TK_NotStart,BL2-XE-EAST-10,Stone Fixation,4433,1328,1328,240,0,12749.6,12749.6,240,286769.9,0,286769.9,,,,2016-03-02 08:00,2016-03-31 16:00,,2015-09-18 08:00,2015-10-17 16:00,2015-09-18 08:00,2015-10-17 16:00,2015-09-18 08:00,2015-10-17 16:00,2016-03-02 08:00,2016-03-31 16:00,,PT_Normal,,,,,gyE31J9CH0i2DanG2i+ybg,tDyH6MFBQiCKpgps0uGRMg,,,N,0,0,,,2014-04-05 12:28,2014-04-05 13:21,admin,admin,
2348,142091,1749,35867,642,0,N,N,N,CP_Drtn,TT_Task,DT_FixedDUR2,TK_NotStart,BL2-XE-EAST-20,Aluminum Glazing,4433,1328,1328,240,0,7768.8,7768.8,240,438095.3,0,438095.3,,,,2016-03-02 08:00,2016-03-31 16:00,,2015-09-18 08:00,2015-10-17 16:00,2015-09-18 08:00,2015-10-17 16:00,2015-09-18 08:00,2015-10-17 16:00,2016-03-02 08:00,2016-03-31 16:00,,PT_Normal,,,,,5t18koAUXU+BiTI2k+JWVQ,wj5Ms2QBSNa8uZ523gD/cg,,,N,0,0,,,2014-04-05 12:28,2014-04-05 13:21,admin,admin,
2349,142092,1749,35805,642,0,N,N,N,CP_Drtn,TT_Task,DT_FixedDUR2,TK_NotStart,BL1-XE-EAST-10,Stone Fixation,4433,1880,1880,240,0,8274.2,8274.2,240,186118.6,0,186118.6,,,,2016-03-02 08:00,2016-03-31 16:00,,2015-07-11 08:00,2015-08-09 16:00,2015-07-11 08:00,2015-08-09 16:00,2015-07-11 08:00,2015-08-09 16:00,2016-03-02 08:00,2016-03-31 16:00,,PT_Normal,,,,,F+zyihdodk2DnDwqSPmfGQ,dNajpTp+SomZmR5QDEPaPg,,,N,0,0,,,2014-04-05 12:28,2014-04-05 13:21,admin,admin,
2350,142093,1749,35805,642,0,N,N,N,CP_Drtn,TT_Task,DT_FixedDUR2,TK_NotStart,BL1-XE-EAST-20,Aluminum Glazing,4433,1880,1880,240,0,5089.8,5089.8,240,287032,0,287032,,,,2016-03-02 08:00,2016-03-31 16:00,,2015-07-11 08:00,2015-08-09 16:00,2015-07-11 08:00,2015-08-09 16:00,2015-07-11 08:00,2015-08-09 16:00,2016-03-02 08:00,2016-03-31 16:00,,PT_Normal,,,,,4x1m8rrYFk2EHJF7EynYBA,WOAbZTiJQaSsyDXpxAcfrg,,,N,0,0,,,2014-04-05 12:28,2014-04-05 13:21,admin,admin,
2351,142094,1749,35884,642,0,N,N,N,CP_Drtn,TT_Task,DT_FixedDUR2,TK_NotStart,BL1-XE-WEST-10,Stone Fixation,4433,1880,0,240,0,8273.8,8273.8,240,186109,0,186109,,,,2016-02-01 08:00,2016-03-01 16:00,,2015-06-11 08:00,2015-07-10 16:00,2015-06-11 08:00,2015-07-10 16:00,2015-06-11 08:00,2015-07-10 16:00,2016-02-01 08:00,2016-03-01 16:00,,PT_Normal,,,,,Z6C0/JyAnUOgXre6fWUFbw,vxQFDYsOSMOyW1Suk778Kw,,,N,0,0,,,2014-04-05 12:28,2014-04-05 13:21,admin,admin,
2352,142095,1749,35884,642,0,N,N,N,CP_Drtn,TT_Task,DT_FixedDUR2,TK_NotStart,BL1-XE-WEST-20,Aluminum Glazing,4433,1880,0,240,0,5110.95,5110.95,240,288223.4,0,288223.4,,,,2016-02-01 08:00,2016-03-01 16:00,,2015-06-11 08:00,2015-07-10 16:00,2015-06-11 08:00,2015-07-10 16:00,2015-06-11 08:00,2015-07-10 16:00,2016-02-01 08:00,2016-03-01 16:00,,PT_Normal,,,,,gkhYi4IpV0urINDPOsOXyw,RL5Kr6NtTCCuLL5opT6zcA,,,N,0,0,,,2014-04-05 12:28,2014-04-05 13:21,admin,admin,
2353,142096,1749,35834,642,0,N,N,N,CP_Drtn,TT_Task,DT_FixedDUR2,TK_NotStart,BL2-XE-WEST-10,Stone Fixation,4433,1328,0,240,0,12749.6,12749.6,240,286769.9,0,286769.9,,,,2016-02-01 08:00,2016-03-01 16:00,,2015-08-19 08:00,2015-09-17 16:00,2015-08-19 08:00,2015-09-17 16:00,2015-08-19 08:00,2015-09-17 16:00,2016-02-01 08:00,2016-03-01 16:00,,PT_Normal,,,,,fzmISSrp+0O7V/mGLLjRjQ,fAkVi8d5Qze/lNJu/TD0VA,,,N,0,0,,,2014-04-05 12:28,2014-04-05 13:21,admin,admin,
2354,142097,1749,35834,642,0,N,N,N,CP_Drtn,TT_Task,DT_FixedDUR2,TK_NotStart,BL2-XE-WEST-20,Aluminum Glazing,4433,1328,0,240,0,7768.8,7768.8,240,438095.3,0,438095.3,,,,2016-02-01 08:00,2016-03-01 16:00,,2015-08-19 08:00,2015-09-17 16:00,2015-08-19 08:00,2015-09-17 16:00,2015-08-19 08:00,2015-09-17 16:00,2016-02-01 08:00,2016-03-01 16:00,,PT_Normal,,,,,bE3Sfo78NUCjNFZPuWv0AA,FfcvW5PoSHmvCLMvzohivQ,,,N,0,0,,,2014-04-05 12:28,2014-04-05 13:21,admin,admin,
2355,142098,1749,35796,642,0,N,N,N,CP_Drtn,TT_Task,DT_FixedDUR2,TK_NotStart,BL2-XE-SOTH-10,Stone Fixation,4433,1328,0,240,0,6508.47,6508.47,240,146405.7,0,146405.7,,,,2016-01-02 08:00,2016-01-31 16:00,,2015-07-20 08:00,2015-08-18 16:00,2015-07-20 08:00,2015-08-18 16:00,2015-07-20 08:00,2015-08-18 16:00,2016-01-02 08:00,2016-01-31 16:00,,PT_Normal,,,,,2aiFeqdJo0+WP6FMbC0Ikw,3zZJ/wA3QomNfQIZfq8opQ,,,N,0,0,,,2014-04-05 12:28,2014-04-05 13:21,admin,admin,
2356,142099,1749,35796,642,0,N,N,N,CP_Drtn,TT_Task,DT_FixedDUR2,TK_NotStart,BL2-XE-SOTH-20,Aluminum Glazing,4433,1328,0,240,0,3884,3884,240,219061.4,0,219061.4,,,,2016-01-02 08:00,2016-01-31 16:00,,2015-07-20 08:00,2015-08-18 16:00,2015-07-20 08:00,2015-08-18 16:00,2015-07-20 08:00,2015-08-18 16:00,2016-01-02 08:00,2016-01-31 16:00,,PT_Normal,,,,,MpCyaPPFYUGnZvexGIPXNg,koIZXWjVTDy0imFW6CvA5A,,,N,0,0,,,2014-04-05 12:28,2014-04-05 13:21,admin,admin,
2357,142100,1749,35847,642,0,N,N,N,CP_Drtn,TT_Task,DT_FixedDUR2,TK_NotStart,BL1-XE-SOTH-10,Stone Fixation,4433,1880,0,240,0,4997.9,4997.9,240,112433.3,0,112433.3,,,,2016-01-02 08:00,2016-01-31 16:00,,2015-05-09 08:00,2015-06-10 16:00,2015-05-09 08:00,2015-06-10 16:00,2015-05-09 08:00,2015-06-10 16:00,2016-01-02 08:00,2016-01-31 16:00,,PT_Normal,,,,,IN1Ln27M0Eq1ycAjNyA9tQ,B8sSsVr0QxSxnJSfHClQDg,,,N,0,0,,,2014-04-05 12:28,2014-04-05 13:21,admin,admin,
2358,142101,1749,35847,642,0,N,N,N,CP_Drtn,TT_Task,DT_FixedDUR2,TK_NotStart,BL1-XE-SOTH-20,Aluminum Glazing,4433,1880,0,240,0,3067.2,3067.2,240,172982.3,0,172982.3,,,,2016-01-02 08:00,2016-01-31 16:00,,2015-05-09 08:00,2015-06-10 16:00,2015-05-09 08:00,2015-06-10 16:00,2015-05-09 08:00,2015-06-10 16:00,2016-01-02 08:00,2016-01-31 16:00,,PT_Normal,,,,,xRyCMe+qXUuZO1iIpELURQ,u5BO3V1NTHiyWukMBL27HQ,,,N,0,0,,,2014-04-05 12:28,2014-04-05 13:21,admin,admin,
2359,142102,1749,35905,642,0,N,N,N,CP_Drtn,TT_Task,DT_FixedDUR2,TK_NotStart,BL1-XE-NRTH-10,Stone Fixation,4433,1880,0,240,0,5000,5000,240,112481.9,0,112481.9,,,,2015-12-03 08:00,2016-01-01 16:00,,2015-04-04 08:00,2015-05-07 16:00,2015-04-04 08:00,2015-05-07 16:00,2015-04-04 08:00,2015-05-07 16:00,2015-12-03 08:00,2016-01-01 16:00,,PT_Normal,,,,,qsMgGAQR00yQNR8XKT3etw,+akcWM+kTTidWWQhml4UGw,,,N,0,0,,,2014-04-05 12:28,2014-04-05 13:21,admin,admin,
2360,142103,1749,35905,642,0,N,N,N,CP_Drtn,TT_Task,DT_FixedDUR2,TK_NotStart,BL1-XE-NRTH-20,Aluminum Glazing,4433,1880,0,240,0,3873.6,3873.6,240,172286,0,172286,,,,2015-12-03 08:00,2016-01-01 16:00,,2015-04-04 08:00,2015-05-07 16:00,2015-04-04 08:00,2015-05-07 16:00,2015-04-04 08:00,2015-05-07 16:00,2015-12-03 08:00,2016-01-01 16:00,,PT_Normal,,,,,re0mNsoMMEWlaNL2419pZw,l+nVjO3tSuu57UIn/YzxvA,,,N,0,0,,,2014-04-05 12:28,2014-04-05 13:21,admin,admin,
2361,142104,1749,35871,642,0,N,N,N,CP_Drtn,TT_Task,DT_FixedDUR2,TK_NotStart,BL2-XE-NRTH-10,Stone Fixation,4433,1328,0,240,0,6508.47,6508.47,240,146405.7,0,146405.7,,,,2015-12-03 08:00,2016-01-01 16:00,,2015-06-20 08:00,2015-07-19 16:00,2015-06-20 08:00,2015-07-19 16:00,2015-06-20 08:00,2015-07-19 16:00,2015-12-03 08:00,2016-01-01 16:00,,PT_Normal,,,,,OncveXH8OEyxv5vy7nCbQQ,d0dhIhT6SuyDc0EA0bD+fA,,,N,0,0,,,2014-04-05 12:28,2014-04-05 13:21,admin,admin,
2362,142105,1749,35871,642,0,N,N,N,CP_Drtn,TT_Task,DT_FixedDUR2,TK_NotStart,BL2-XE-NRTH-20,Aluminum Glazing,4433,1328,0,240,0,3873.6,3873.6,240,218456.6,0,218456.6,,,,2015-12-03 08:00,2016-01-01 16:00,,2015-06-20 08:00,2015-07-19 16:00,2015-06-20 08:00,2015-07-19 16:00,2015-06-20 08:00,2015-07-19 16:00,2015-12-03 08:00,2016-01-01 16:00,,PT_Normal,,,,,0adCD5xgzki1UKPImFg3LQ,sya8wXmjTaOPVRSLTbi0iA,,,N,0,0,,,2014-04-05 12:28,2014-04-05 13:21,admin,admin,
2363,142106,1749,35610,642,0,N,N,N,CP_Drtn,TT_Task,DT_FixedDUR2,TK_NotStart,BL2-MEP-RZR-100,Drainage Riser and Final Connection,,1296,808,200,0,800,800,200,10227.101842,0,10227.101842,,,,2016-01-16 08:00,2016-02-09 16:00,,2015-08-07 08:00,2015-08-31 16:00,2015-08-07 08:00,2015-08-31 16:00,2015-08-07 08:00,2015-08-31 16:00,2016-01-16 08:00,2016-02-09 16:00,,PT_Normal,,,,,aAMJgXpvpUq/IRCClXsh4g,D114ONBocUmmTniJ3tzXNA,,,N,0,0,,,2014-04-05 12:28,2014-04-05 13:21,admin,admin,
2364,142107,1749,35610,642,0,N,N,N,CP_Drtn,TT_Task,DT_FixedDUR2,TK_NotStart,BL2-MEP-RZR-110,Chilled Water Pipes Riser and Final Connection,4457,1240,952,200,0,672,672,200,23230.388688,0,23230.388688,,,,2016-01-09 08:00,2016-02-02 16:00,,2015-08-07 08:00,2015-08-31 16:00,2015-08-07 08:00,2015-08-31 16:00,2015-08-07 08:00,2015-08-31 16:00,2016-01-09 08:00,2016-02-02 16:00,,PT_Normal,,,,,PieD680WOUe0jl26HkSRRg,dDaBaKpni0+JpxWfznr8iA,,,N,0,0,,,2014-04-05 12:28,2014-04-05 13:21,admin,admin,
2365,142108,1749,35610,642,0,N,N,N,CP_Drtn,TT_Task,DT_FixedDUR2,TK_NotStart,BL2-MEP-RZR-120,Fire Fighting Pipes Riser and Final Connection,4456,792,0,200,0,800,800,200,23178.706308,0,23178.706308,,,,2015-11-14 08:00,2015-12-08 16:00,,2015-08-07 08:00,2015-08-31 16:00,2015-08-07 08:00,2015-08-31 16:00,2015-08-07 08:00,2015-08-31 16:00,2015-11-14 08:00,2015-12-08 16:00,,PT_Normal,,,,,PaaNXP7nDUCohZcRTwriEA,LI/GwN5Vr02u3xbT0ZoZjQ,,,N,0,0,,,2014-04-05 12:28,2014-04-05 13:21,admin,admin,
2366,142109,1749,35610,642,0,N,N,N,CP_Drtn,TT_Task,DT_FixedDUR2,TK_NotStart,BL2-MEP-RZR-130,Water Supply Pipes Riser and Final Connection,,1120,856,200,0,800,800,200,8852.35053,0,8852.35053,,,,2015-12-25 08:00,2016-01-18 16:00,,2015-08-07 08:00,2015-08-31 16:00,2015-08-07 08:00,2015-08-31 16:00,2015-08-07 08:00,2015-08-31 16:00,2015-12-25 08:00,2016-01-18 16:00,,PT_Normal,,,,,GMBzAqw/X0CyzzcGVKKWqQ,6CpJ4DjihEuA/rsU75h5wQ,,,N,0,0,,,2014-04-05 12:28,2014-04-05 13:21,admin,admin,
2367,142110,1749,35610,642,0,N,N,N,CP_Drtn,TT_Task,DT_FixedDUR2,TK_NotStart,BL2-MEP-RZR-140,Duct Riser Including Connection,4454,1352,984,168,0,672,672,168,33480.17291,0,33480.17291,,,,2016-01-23 08:00,2016-02-12 16:00,,2015-08-07 08:00,2015-08-27 16:00,2015-08-07 08:00,2015-08-27 16:00,2015-08-07 08:00,2015-08-27 16:00,2016-01-23 08:00,2016-02-12 16:00,,PT_Normal,,,,,PMuyAKJF+0OhWbk4QRVB4Q,KyDXY3I3pU2wj4GiaMoYAQ,,,N,0,0,,,2014-04-05 12:28,2014-04-05 13:21,admin,admin,
2368,142111,1749,35618,642,0,N,N,N,CP_Drtn,TT_Task,DT_FixedDUR2,TK_NotStart,BL1-MEP-RZR-100,Drainage Riser and Final Connection,,1560,904,168,0,672,672,168,10223.101842,0,10223.101842,,,,2016-01-24 08:00,2016-02-13 16:00,,2015-07-13 08:00,2015-08-02 16:00,2015-07-13 08:00,2015-08-02 16:00,2015-07-13 08:00,2015-08-02 16:00,2016-01-24 08:00,2016-02-13 16:00,,PT_Normal,,,,,w3Xvj5I6s0uo66iojQJ66A,7ClAd3G160C4OsfLcLO7dw,,,N,0,0,,,2014-04-05 12:28,2014-04-05 13:21,admin,admin,
2369,142112,1749,35618,642,0,N,N,N,CP_Drtn,TT_Task,DT_FixedDUR2,TK_NotStart,BL1-MEP-RZR-110,Chilled Water Pipes Riser and Final Connection,4457,1424,856,168,0,672,672,168,21009.783086,0,21009.783086,,,,2016-01-13 08:00,2016-02-02 16:00,,2015-07-19 08:00,2015-08-08 16:00,2015-07-19 08:00,2015-08-08 16:00,2015-07-19 08:00,2015-08-08 16:00,2016-01-13 08:00,2016-02-02 16:00,,PT_Normal,,,,,vW7m3khcPEelyhKf32r3Og,NtWy8bzG5kOwh1CCpB7KEw,,,N,0,0,,,2014-04-05 12:28,2014-04-05 13:21,admin,admin,
2370,142113,1749,35618,642,0,N,N,N,CP_Drtn,TT_Task,DT_FixedDUR2,TK_NotStart,BL1-MEP-RZR-120,Fire Fighting Pipes Riser and Final Connection,4456,484,0,168,0,672,672,168,19711.986838,0,19711.986838,,,,2015-07-30 12:00,2015-08-20 12:00,,2015-05-31 08:00,2015-06-20 16:00,2015-05-31 08:00,2015-06-20 16:00,2015-05-31 08:00,2015-06-20 16:00,2015-07-30 12:00,2015-08-20 12:00,,PT_Normal,,,,,T75gToBzRk+9e3K3fE5kLQ,EzC5EpYm+0SAyCR9AYMJdA,,,N,0,0,,,2014-04-05 12:28,2014-04-05 13:21,admin,admin,
2371,142114,1749,35618,642,0,N,N,N,CP_Drtn,TT_Task,DT_FixedDUR2,TK_NotStart,BL1-MEP-RZR-130,Water Supply Pipes Riser and Final Connection,,1384,904,168,0,672,672,168,8848.35053,0,8848.35053,,,,2016-01-02 08:00,2016-01-22 16:00,,2015-07-13 08:00,2015-08-02 16:00,2015-07-13 08:00,2015-08-02 16:00,2015-07-13 08:00,2015-08-02 16:00,2016-01-02 08:00,2016-01-22 16:00,,PT_Normal,,,,,e25qAv1pXEy6jxHRLlbp4Q,5uQckZrs1k6zDIPwPt2Hlg,,,N,0,0,,,2014-04-05 12:28,2014-04-05 13:21,admin,admin,
2372,142115,1749,35618,642,0,N,N,N,CP_Drtn,TT_Task,DT_FixedDUR2,TK_NotStart,BL1-MEP-RZR-140,Duct Riser Including Connection,4454,1584,904,168,0,672,672,168,30235.087943,0,30235.087943,,,,2016-01-27 08:00,2016-02-16 16:00,,2015-07-13 08:00,2015-08-02 16:00,2015-07-13 08:00,2015-08-02 16:00,2015-07-13 08:00,2015-08-02 16:00,2016-01-27 08:00,2016-02-16 16:00,,PT_Normal,,,,,NmX0d/kuV0qlWGHv8XFezw,BLeSW/K8p0yBuMnkoP7m6g,,,N,0,0,,,2014-04-05 12:28,2014-04-05 13:21,admin,admin,
2373,142116,1749,36562,642,0,N,N,N,CP_Drtn,TT_Task,DT_FixedDUR2,TK_NotStart,P4-MEP-PL-B2-1000,Parking Drain Installation,,3268,0,48,0,6,6,48,553.83323,0,553.83323,,,,2016-01-12 08:00,2016-01-17 16:00,,2014-10-23 12:00,2014-11-02 12:00,2014-10-23 12:00,2014-11-02 12:00,2014-10-23 12:00,2014-11-02 12:00,2016-01-12 08:00,2016-01-17 16:00,,PT_Normal,,,,,2B60JwJPv06IRcoorvT1xA,ONOEE9ReT/mdfuAj1U23rg,,,N,0,0,,,2014-04-05 12:28,2014-04-05 13:21,admin,admin,
2374,142117,1749,36452,642,0,N,N,N,CP_Drtn,TT_Task,DT_FixedDUR2,TK_NotStart,P4-MEP-PL-B2-1010,Supports  installation for High level Pipes,,3120,0,144,0,16.352,16.352,144,168.974568,0,168.974568,,,,2015-11-07 08:00,2015-11-24 16:00,,2014-08-25 08:00,2014-09-14 16:00,2014-08-25 08:00,2014-09-14 16:00,2014-08-25 08:00,2014-09-14 16:00,2015-11-07 08:00,2015-11-24 16:00,,PT_Normal,,,,,ICQtqPxP7USfGaXa5uOoGQ,RGylZfRfS7S8qFxWYfSAxA,,,N,0,0,,,2014-04-05 12:28,2014-04-05 13:21,admin,admin,
2375,142118,1749,36562,642,0,N,N,N,CP_Drtn,TT_Task,DT_FixedDUR2,TK_NotStart,P4-MEP-PL-B2-2020,High Level Water Supply Pipes and Fittings Installation,,2712,0,168,0,150.02,150.02,168,2166.056515,0,2166.056515,,,,2015-11-25 08:00,2015-12-15 16:00,,2014-11-22 08:00,2014-12-15 16:00,2014-11-22 08:00,2014-12-15 16:00,2014-11-22 08:00,2014-12-15 16:00,2015-11-25 08:00,2015-12-15 16:00,,PT_Normal,,,,,8i1L/x4MZku8931udTbSTQ,84AynvRzQw6Kqdqa455XTw,,,N,0,0,,,2014-04-05 12:28,2014-04-05 13:21,admin,admin,
2376,142119,1749,36562,642,0,N,N,N,CP_Drtn,TT_Task,DT_FixedDUR2,TK_NotStart,P4-MEP-PL-B2-2000,High Level Drainage Pipes Installation,,3264,116,168,0,244.38,244.38,168,6583.525267,0,6583.525267,,,,2015-12-13 08:00,2016-01-02 16:00,,2014-09-15 08:00,2014-10-13 16:00,2014-09-15 08:00,2014-10-13 16:00,2014-09-15 08:00,2014-10-13 16:00,2015-12-13 08:00,2016-01-02 16:00,,PT_Normal,,,,,aVPe1uKWsEuhxLX8E+Z92Q,GBV2zgu7RLiHJP52OB7aeg,,,N,0,0,,,2014-04-05 12:28,2014-04-05 13:21,admin,admin,
2377,142120,1749,36562,642,0,N,N,N,CP_Drtn,TT_Task,DT_FixedDUR2,TK_NotStart,P4-MEP-PL-B2-2030,Water Supply Pipes Pressure Test,4456,2712,120,48,0,11.245,11.245,48,132.177363,0,132.177363,,,,2015-12-16 08:00,2015-12-21 16:00,,2014-12-16 08:00,2014-12-22 16:00,2014-12-16 08:00,2014-12-22 16:00,2014-12-16 08:00,2014-12-22 16:00,2015-12-16 08:00,2015-12-21 16:00,,PT_Normal,,,,,jE+fQAq220Wpl96a0pwK8w,Qq0/OaovQn+aM8KkeeorkQ,,,N,0,0,,,2014-04-05 12:28,2014-04-05 13:21,admin,admin,
2378,142121,1749,36562,642,0,N,N,N,CP_Drtn,TT_Task,DT_FixedDUR2,TK_NotStart,P4-MEP-PL-B2-2010,Drainage Pipes Gravity Test,,3268,124,48,0,7.97,7.97,48,826.240719,0,826.240719,,,,2016-01-18 08:00,2016-01-23 16:00,,2014-11-02 12:00,2014-11-10 12:00,2014-11-02 12:00,2014-11-10 12:00,2014-11-02 12:00,2014-11-10 12:00,2016-01-18 08:00,2016-01-23 16:00,,PT_Normal,,,,,JfKz4wo6bkSKVGHrMDNZvQ,843q/oPGR3WGXX+jOD00iw,,,N,0,0,,,2014-04-05 12:28,2014-04-05 13:21,admin,admin,
2379,142122,1749,36562,642,0,N,N,N,CP_Drtn,TT_Task,DT_FixedDUR2,TK_NotStart,P4-MEP-PL-B2-2040,Booster Pumps Installation Including Connection,,1568,0,240,0,625,625,240,28719.095952,0,28719.095952,,,,2015-12-22 08:00,2016-01-20 16:00,,2015-06-09 08:00,2015-07-08 16:00,2015-06-09 08:00,2015-07-08 16:00,2015-06-09 08:00,2015-07-08 16:00,2015-12-22 08:00,2016-01-20 16:00,,PT_Normal,,,,,h1BxvTl2wUClhDvQj7lFig,M0lsXl1YSKeoHm7m35gviQ,,,N,0,0,,,2014-04-05 12:28,2014-04-05 13:21,admin,admin,
2380,142123,1749,36457,642,0,N,N,N,CP_Drtn,TT_Task,DT_FixedDUR2,TK_NotStart,P4-MEP-FF-B2-2000,Sprinkler Pipes and Fittings Installation,,2736,0,168,0,244.38,244.38,168,35377.329721,0,35377.329721,,,,2015-12-14 08:00,2016-01-03 16:00,,2014-12-10 08:00,2015-01-05 16:00,2014-12-10 08:00,2015-01-05 16:00,2014-12-10 08:00,2015-01-05 16:00,2015-12-14 08:00,2016-01-03 16:00,,PT_Normal,,,,,YvaGnS2G/0mCYX1voECtrg,AMMr7hflSAioj8jY2irRTQ,,,N,0,0,,,2014-04-05 12:28,2014-04-05 13:21,admin,admin,
2381,142124,1749,36457,642,0,N,N,N,CP_Drtn,TT_Task,DT_FixedDUR2,TK_NotStart,P4-MEP-FF-B2-2010,Sprinkler Pipes Pressure Test,,2808,0,48,0,7.97,7.97,48,1970.24054,0,1970.24054,,,,2016-01-13 08:00,2016-01-18 16:00,,2015-01-06 08:00,2015-01-12 16:00,2015-01-06 08:00,2015-01-12 16:00,2015-01-06 08:00,2015-01-12 16:00,2016-01-13 08:00,2016-01-18 16:00,,PT_Normal,,,,,DR9dhGIBXE2W3ZNslz4/fA,HPTJAzEYQJOp4lBjUV8ROg,,,N,0,0,,,2014-04-05 12:28,2014-04-05 13:21,admin,admin,
2382,142125,1749,36457,642,0,N,N,N,CP_Drtn,TT_Task,DT_FixedDUR2,TK_NotStart,P4-MEP-FF-B2-2020,Fire Fighting Pumps Installation Including Connection,,2584,1016,240,0,450,450,240,508217.675797,0,508217.675797,,,,2015-12-22 08:00,2016-01-20 16:00,,2015-01-13 08:00,2015-02-16 16:00,2015-01-13 08:00,2015-02-16 16:00,2015-01-13 08:00,2015-02-16 16:00,2015-12-22 08:00,2016-01-20 16:00,,PT_Normal,,,,,WGdLBYjd6Uq0/RqIwqo1iA,VRju1POBRdS6ZpdDvqO6uQ,,,N,0,0,,,2014-04-05 12:28,2014-04-05 13:21,admin,admin,
2383,142126,1749,36236,642,0,N,N,N,CP_Drtn,TT_Task,DT_FixedDUR2,TK_NotStart,P4-MEP-EL-B2-1010,PVC Back Boxes and Conduits  Fixing in Wall,,3088,0,96,0,384,384,96,3319.67233,0,3319.67233,,,,2015-11-09 08:00,2015-11-20 16:00,,2014-09-01 08:00,2014-09-14 16:00,2014-09-01 08:00,2014-09-14 16:00,2014-09-01 08:00,2014-09-14 16:00,2015-11-09 08:00,2015-11-20 16:00,,PT_Normal,,,,,dguzThOpekOkZ3hfvSnxEw,aTYO2UgtS+uySvJqBstMIw,,,N,0,0,,,2014-04-05 12:28,2014-04-05 13:21,admin,admin,
2384,142127,1749,36236,642,0,N,N,N,CP_Drtn,TT_Task,DT_FixedDUR2,TK_NotStart,P4-MEP-EL-B2-1000,DB's Inclosure Fixing,4455,3088,0,48,0,96,96,48,2136.399392,0,2136.399392,,,,2015-11-21 08:00,2015-11-26 16:00,,2014-09-15 08:00,2014-09-21 16:00,2014-09-15 08:00,2014-09-21 16:00,2014-09-15 08:00,2014-09-21 16:00,2015-11-21 08:00,2015-11-26 16:00,,PT_Normal,,,,,RVdTCtG/IUu83mCHa9t9Gg,yhL1VJL1QQe+rDiud0xLpg,,,N,0,0,,,2014-04-05 12:28,2014-04-05 13:21,admin,admin,
2385,142128,1749,36134,642,0,N,N,N,CP_Drtn,TT_Task,DT_FixedDUR2,TK_NotStart,P4-MEP-EL-B2-2010,SMDB's Installation,,3408,304,48,0,48,48,48,4976.925025,0,4976.925025,,,,2015-12-31 08:00,2016-01-05 16:00,,2014-09-15 08:00,2014-09-21 16:00,2014-09-15 08:00,2014-09-21 16:00,2014-09-15 08:00,2014-09-21 16:00,2015-12-31 08:00,2016-01-05 16:00,,PT_Normal,,,,,CargC2YeLU2nSp01TNmHaA,hDZb/oWMRvaQTgVPO8XTlQ,,,N,0,0,,,2014-04-05 12:28,2014-04-05 13:21,admin,admin,
2386,142129,1749,36134,642,0,N,N,N,CP_Drtn,TT_Task,DT_FixedDUR2,TK_NotStart,P4-MEP-EL-B2-2060,BMS System Wiring,,2776,0,64,0,186,186,64,15191.435697,0,15191.435697,,,,2015-12-30 08:00,2016-01-06 16:00,,2014-12-23 08:00,2014-12-31 16:00,2014-12-23 08:00,2014-12-31 16:00,2014-12-23 08:00,2014-12-31 16:00,2015-12-30 08:00,2016-01-06 16:00,,PT_Normal,,,,,xXHeeoAGW0CgCk5fI43cWw,t7kIFnUJQ96b1O9ZywjjAw,,,N,0,0,,,2014-04-05 12:28,2014-04-05 13:21,admin,admin,
2387,142130,1749,36134,642,0,N,N,N,CP_Drtn,TT_Task,DT_FixedDUR2,TK_NotStart,P4-MEP-EL-B2-2040,Lighting  Wiring,,3088,0,96,0,241.713,241.713,96,3578.08423,0,3578.08423,,,,2015-12-09 08:00,2015-12-20 16:00,,2014-10-11 08:00,2014-10-23 16:00,2014-10-11 08:00,2014-10-23 16:00,2014-10-11 08:00,2014-10-23 16:00,2015-12-09 08:00,2015-12-20 16:00,,PT_Normal,,,,,4I8v22UPeE6wnbBhmagTgQ,hyGKBkkFSdOhv9qaSooxQQ,,,N,0,0,,,2014-04-05 12:28,2014-04-05 13:21,admin,admin,
2388,142131,1749,36134,642,0,N,N,N,CP_Drtn,TT_Task,DT_FixedDUR2,TK_NotStart,P4-MEP-EL-B2-2050,Power Points Wiring,,3232,144,96,0,192,192,96,2906.213289,0,2906.213289,,,,2015-12-09 08:00,2015-12-20 16:00,,2014-09-15 08:00,2014-09-28 16:00,2014-09-15 08:00,2014-09-28 16:00,2014-09-15 08:00,2014-09-28 16:00,2015-12-09 08:00,2015-12-20 16:00,,PT_Normal,,,,,ZIWgGjQ9dU2nxHCCgjC7lA,ztiyhK6YRjOg2n8vSCwaEg,,,N,0,0,,,2014-04-05 12:28,2014-04-05 13:21,admin,admin,
2389,142132,1749,36134,642,0,N,N,N,CP_Drtn,TT_Task,DT_FixedDUR2,TK_NotStart,P4-MEP-EL-B2-2020,Cable Tray and Trunking Installation,,3032,0,168,0,504,504,168,9085.448617,0,9085.448617,,,,2015-11-23 08:00,2015-12-13 16:00,,2014-09-25 08:00,2014-10-23 16:00,2014-09-25 08:00,2014-10-23 16:00,2014-09-25 08:00,2014-10-23 16:00,2015-11-23 08:00,2015-12-13 16:00,,PT_Normal,,,,,tWGKW8woSEO5T9/SxlgQ6Q,KzrMipvATA+XGc8HcU9wjQ,,,N,0,0,,,2014-04-05 12:28,2014-04-05 13:21,admin,admin,
2390,142133,1749,36134,642,0,N,N,N,CP_Drtn,TT_Task,DT_FixedDUR2,TK_NotStart,P4-MEP-EL-B2-2070,Emergency Light Wiring,,2776,0,64,0,128,128,64,1210.028798,0,1210.028798,,,,2016-01-07 08:00,2016-01-14 16:00,,2015-01-04 08:00,2015-01-12 16:00,2015-01-04 08:00,2015-01-12 16:00,2015-01-04 08:00,2015-01-12 16:00,2016-01-07 08:00,2016-01-14 16:00,,PT_Normal,,,,,WSWamBsu/UmVv8UOAKWOxw,lilrgG1MTwGaMLB7YaNyHw,,,N,0,0,,,2014-04-05 12:28,2014-04-05 13:21,admin,admin,
2391,142134,1749,36134,642,0,N,N,N,CP_Drtn,TT_Task,DT_FixedDUR2,TK_NotStart,P4-MEP-EL-B2-2030,Fire Alarm System Wiring,,2920,0,96,0,192,192,96,7123.009694,0,7123.009694,,,,2015-12-30 08:00,2016-01-10 16:00,,2014-12-02 08:00,2014-12-15 16:00,2014-12-02 08:00,2014-12-15 16:00,2014-12-02 08:00,2014-12-15 16:00,2015-12-30 08:00,2016-01-10 16:00,,PT_Normal,,,,,CMqNZcDjGkWc9NVnPsiPag,BgQQTyynSDKPeQF1RuB/FA,,,N,0,0,,,2014-04-05 12:28,2014-04-05 13:21,admin,admin,
2392,142135,1749,36134,642,0,N,N,N,CP_Drtn,TT_Task,DT_FixedDUR2,TK_NotStart,P4-MEP-EL-B2-2000,DB's Installation and Termination,4455,3088,0,96,0,288,288,96,4982.925025,0,4982.925025,,,,2015-11-27 08:00,2015-12-08 16:00,,2014-09-22 08:00,2014-10-09 14:00,2014-09-22 08:00,2014-10-09 14:00,2014-09-22 08:00,2014-10-09 14:00,2015-11-27 08:00,2015-12-08 16:00,,PT_Normal,,,,,vD4xfQv5uUm6M3wmXZMPsA,zVq+f/HNS5SNGQmuvawTVw,,,N,0,0,,,2014-04-05 12:28,2014-04-05 13:21,admin,admin,
2393,142136,1749,36185,642,0,N,N,N,CP_Drtn,TT_Task,DT_FixedDUR2,TK_NotStart,P4-MEP-EL-B2-3020,Lights Fitting Fixing,,3136,336,112,0,244,244,112,7336.659378,0,7336.659378,,,,2016-01-16 08:00,2016-01-29 16:00,,2014-11-20 08:00,2014-12-06 16:00,2014-11-20 08:00,2014-12-06 16:00,2014-11-20 08:00,2014-12-06 16:00,2016-01-16 08:00,2016-01-29 16:00,,PT_Normal,,,,,ltwN9uV8cUG+0jKUgWkHfQ,9eu7qAYeRa2W1h3VCfR+gw,,,N,0,0,,,2014-04-05 12:28,2014-04-05 13:21,admin,admin,
2394,142137,1749,36185,642,0,N,N,N,CP_Drtn,TT_Task,DT_FixedDUR2,TK_NotStart,P4-MEP-EL-B2-3050,Sockets and Switches Fixing,,2376,0,64,0,128,128,64,1174.957134,0,1174.957134,,,,2016-01-27 08:00,2016-02-03 16:00,,2015-03-26 08:00,2015-04-04 16:00,2015-03-26 08:00,2015-04-04 16:00,2015-03-26 08:00,2015-04-04 16:00,2016-01-27 08:00,2016-02-03 16:00,,PT_Normal,,,,,R/ZEvQpNJkidiDS9htpddQ,PzF5dupWRvqGDVhjx+Fglg,,,N,0,0,,,2014-04-05 12:28,2014-04-05 13:21,admin,admin,
2395,142138,1749,36185,642,0,N,N,N,CP_Drtn,TT_Task,DT_FixedDUR2,TK_NotStart,P4-MEP-EL-B2-3060,Emergency Light Fixing,,2376,0,64,0,128,128,64,5722.024623,0,5722.024623,,,,2016-01-27 08:00,2016-02-03 16:00,,2015-03-26 08:00,2015-04-04 16:00,2015-03-26 08:00,2015-04-04 16:00,2015-03-26 08:00,2015-04-04 16:00,2016-01-27 08:00,2016-02-03 16:00,,PT_Normal,,,,,fQXydFt50ki2NfsQQ09trA,gGH5eNLYSASB6TDUXRc79w,,,N,0,0,,,2014-04-05 12:28,2014-04-05 13:21,admin,admin,
2396,142139,1749,36185,642,0,N,N,N,CP_Drtn,TT_Task,DT_FixedDUR2,TK_NotStart,P4-MEP-EL-B2-3000,CO2 System Installation,,1568,0,48,0,179.65,179.65,48,21033.761938,0,21033.761938,,,,2016-02-05 08:00,2016-02-10 16:00,,2015-07-24 08:00,2015-07-29 16:00,2015-07-24 08:00,2015-07-29 16:00,2015-07-24 08:00,2015-07-29 16:00,2016-02-05 08:00,2016-02-10 16:00,,PT_Normal,,,,,7hhIa+skfEqdcpQG4nJC7Q,pD5sij40QIGjLYxYjpY/Vg,,,N,0,0,,,2014-04-05 12:28,2014-04-05 13:21,admin,admin,
2397,142140,1749,36185,642,0,N,N,N,CP_Drtn,TT_Task,DT_FixedDUR2,TK_NotStart,P4-MEP-EL-B2-3010,Fire Alarm System Detector Installation,,2920,144,96,0,192,192,96,4046.378277,0,4046.378277,,,,2016-01-11 08:00,2016-01-22 16:00,,2014-12-16 08:00,2014-12-29 16:00,2014-12-16 08:00,2014-12-29 16:00,2014-12-16 08:00,2014-12-29 16:00,2016-01-11 08:00,2016-01-22 16:00,,PT_Normal,,,,,6rZNBnINOEePXDif+afTEA,USbGdhUHS3iIliTbNEPXtQ,,,N,0,0,,,2014-04-05 12:28,2014-04-05 13:21,admin,admin,
2398,142141,1749,36185,642,0,N,N,N,CP_Drtn,TT_Task,DT_FixedDUR2,TK_NotStart,P4-MEP-EL-B2-3030,SMDB's  Termination and Final Connection,,3136,0,48,0,192,192,48,2791.825001,0,2791.825001,,,,2016-01-10 08:00,2016-01-15 16:00,,2014-11-13 08:00,2014-11-19 16:00,2014-11-13 08:00,2014-11-19 16:00,2014-11-13 08:00,2014-11-19 16:00,2016-01-10 08:00,2016-01-15 16:00,,PT_Normal,,,,,Mwz3q1Pu90q8lSz3lunKAg,TzjGW/yuRKybhrgfCajeRw,,,N,0,0,,,2014-04-05 12:28,2014-04-05 13:21,admin,admin,
2399,142142,1749,36134,642,0,N,N,N,CP_Drtn,TT_Task,DT_FixedDUR2,TK_NotStart,P4-MEP-EL-B2-3040,Power Cable Puling,,3088,0,112,0,168,168,112,13646.333768,0,13646.333768,,,,2015-12-21 08:00,2016-01-03 16:00,,2014-10-26 08:00,2014-11-12 16:00,2014-10-26 08:00,2014-11-12 16:00,2014-10-26 08:00,2014-11-12 16:00,2015-12-21 08:00,2016-01-03 16:00,,PT_Normal,,,,,EMvjPfd0F06a/PWl0Qf/vA,GEYwCBCiTVe9v+7uybFt2w,,,N,0,0,,,2014-04-05 12:28,2014-04-05 13:21,admin,admin,
2400,142143,1749,36185,642,0,N,N,N,CP_Drtn,TT_Task,DT_FixedDUR2,TK_NotStart,P4-MEP-EL-B2-3070,Panels for Mechanical Equipments Installation and Final Connection,4455,1568,0,168,0,21,21,168,194.652798,0,194.652798,,,,2016-01-21 08:00,2016-02-10 16:00,,2015-07-09 08:00,2015-07-29 16:00,2015-07-09 08:00,2015-07-29 16:00,2015-07-09 08:00,2015-07-29 16:00,2016-01-21 08:00,2016-02-10 16:00,,PT_Normal,,,,,2pKSck8gskuGTyKQ4W6WFw,gby8/gZuRTGyB2xOnYH6OA,,,N,0,0,,,2014-04-05 12:28,2014-04-05 13:21,admin,admin,
2401,142144,1749,36473,642,0,N,N,N,CP_Drtn,TT_Task,DT_FixedDUR2,TK_NotStart,P4-MEP-PL-B1-2000,Parking Drain Installation,,3268,124,48,0,48,48,48,553.83323,0,553.83323,,,,2016-01-18 08:00,2016-01-23 16:00,,2014-11-02 12:00,2014-11-10 12:00,2014-11-02 12:00,2014-11-10 12:00,2014-11-02 12:00,2014-11-10 12:00,2016-01-18 08:00,2016-01-23 16:00,,PT_Normal,,,,,R0/bpEXQikGZZiUeIpHUuA,28BJ5yOMTDy812L1e0HErQ,,,N,0,0,,,2014-04-05 12:28,2014-04-05 13:21,admin,admin,
2402,142145,1749,36473,642,0,N,N,N,CP_Drtn,TT_Task,DT_FixedDUR2,TK_NotStart,P4-MEP-PL-B1-2030,High Level Water Supply Pipes and Fittings Installation,,2800,0,168,0,150.02,150.02,168,1329.597866,0,1329.597866,,,,2015-12-27 08:00,2016-01-16 16:00,,2014-12-16 08:00,2015-01-11 16:00,2014-12-16 08:00,2015-01-11 16:00,2014-12-16 08:00,2015-01-11 16:00,2015-12-27 08:00,2016-01-16 16:00,,PT_Normal,,,,,8JrdPiID9kCnVksbdhemBg,YZFFatjhSBG5KMXhoQSiSg,,,N,0,0,,,2014-04-05 12:28,2014-04-05 13:21,admin,admin,
2403,142146,1749,36473,642,0,N,N,N,CP_Drtn,TT_Task,DT_FixedDUR2,TK_NotStart,P4-MEP-PL-B1-2010,High Level Drainage Pipes Installation,,3144,0,168,0,244.38,244.38,168,6583.525267,0,6583.525267,,,,2016-01-03 08:00,2016-01-23 16:00,,2014-11-04 08:00,2014-11-27 16:00,2014-11-04 08:00,2014-11-27 16:00,2014-11-04 08:00,2014-11-27 16:00,2016-01-03 08:00,2016-01-23 16:00,,PT_Normal,,,,,/4tJ49bQ5kWfL9HjFeMqbw,Ygmnyn1gQRi/sDYmqi70/A,,,N,0,0,,,2014-04-05 12:28,2014-04-05 13:21,admin,admin,
2404,142147,1749,36473,642,0,N,N,N,CP_Drtn,TT_Task,DT_FixedDUR2,TK_NotStart,P4-MEP-PL-B1-2040,Water Supply Pipes Pressure Test,4456,2800,2320,48,0,48,48,48,151.744312,0,151.744312,,,,2016-01-17 08:00,2016-01-22 16:00,,2015-01-12 08:00,2015-01-18 16:00,2015-01-12 08:00,2015-01-18 16:00,2015-01-12 08:00,2015-01-18 16:00,2016-01-17 08:00,2016-01-22 16:00,,PT_Normal,,,,,PYQ6vMlkekW6aXP6Y/QUNQ,Bl8dFNBRRZSkjoafkqOIuA,,,N,0,0,,,2014-04-05 12:28,2014-04-05 13:21,admin,admin,
2405,142148,1749,36473,642,0,N,N,N,CP_Drtn,TT_Task,DT_FixedDUR2,TK_NotStart,P4-MEP-PL-B1-2020,Drainage Pipes Gravity Test,,3144,1064,48,0,48,48,48,826.240719,0,826.240719,,,,2016-01-24 08:00,2016-01-29 16:00,,2014-11-29 08:00,2014-12-04 16:00,2014-11-29 08:00,2014-12-04 16:00,2014-11-29 08:00,2014-12-04 16:00,2016-01-24 08:00,2016-01-29 16:00,,PT_Normal,,,,,h4EqZuIE+kOSM8/myTCo1A,xlUc3Ln3T0CQ6i0trl9wIQ,,,N,0,0,,,2014-04-05 12:28,2014-04-05 13:21,admin,admin,
2406,142149,1749,36171,642,0,N,N,N,CP_Drtn,TT_Task,DT_FixedDUR2,TK_NotStart,P4-MEP-EL-B1-2010,"SMDB's , MDB's  Installation",,3040,240,96,0,336,336,96,4208.598932,0,4208.598932,,,,2016-01-06 08:00,2016-01-17 16:00,,2014-11-23 08:00,2014-12-06 16:00,2014-11-23 08:00,2014-12-06 16:00,2014-11-23 08:00,2014-12-06 16:00,2016-01-06 08:00,2016-01-17 16:00,,PT_Normal,,,,,ziCFaw5l4EGfUmjeW5NpqA,Sps4TyLvQjmigSq25C3O+w,,,N,0,0,,,2014-04-05 12:28,2014-04-05 13:21,admin,admin,
2407,142150,1749,36171,642,0,N,N,N,CP_Drtn,TT_Task,DT_FixedDUR2,TK_NotStart,P4-MEP-EL-B1-2060,BMS System Wiring,,2800,0,64,0,186,186,64,15191.435697,0,15191.435697,,,,2016-01-10 08:00,2016-01-17 16:00,,2015-01-04 08:00,2015-01-12 16:00,2015-01-04 08:00,2015-01-12 16:00,2015-01-04 08:00,2015-01-12 16:00,2016-01-10 08:00,2016-01-17 16:00,,PT_Normal,,,,,3CQYG6Wzr0ylIl8PKy/jkg,tM0FdENkSWikBLHi23Po7g,,,N,0,0,,,2014-04-05 12:28,2014-04-05 13:21,admin,admin,
2408,142151,1749,36171,642,0,N,N,N,CP_Drtn,TT_Task,DT_FixedDUR2,TK_NotStart,P4-MEP-EL-B1-2040,Lighting  Wiring,,2928,0,96,0,241.713,241.713,96,3578.08423,0,3578.08423,,,,2015-12-23 08:00,2016-01-03 16:00,,2014-11-23 08:00,2014-12-06 16:00,2014-11-23 08:00,2014-12-06 16:00,2014-11-23 08:00,2014-12-06 16:00,2015-12-23 08:00,2016-01-03 16:00,,PT_Normal,,,,,TBJnZwl8x02cJkzVya8AQA,SkwtyQHgSd6xNSX/ZoR1mQ,,,N,0,0,,,2014-04-05 12:28,2014-04-05 13:21,admin,admin,
2409,142152,1749,36171,642,0,N,N,N,CP_Drtn,TT_Task,DT_FixedDUR2,TK_NotStart,P4-MEP-EL-B1-2050,Power Points Wiring,,2928,0,96,0,192,192,96,2906.213289,0,2906.213289,,,,2015-12-23 08:00,2016-01-03 16:00,,2014-11-23 08:00,2014-12-06 16:00,2014-11-23 08:00,2014-12-06 16:00,2014-11-23 08:00,2014-12-06 16:00,2015-12-23 08:00,2016-01-03 16:00,,PT_Normal,,,,,H3Sg7FZ57Ei7U1T9zbvFug,ADiRG50LRCSQgCDCK/1wOQ,,,N,0,0,,,2014-04-05 12:28,2014-04-05 13:21,admin,admin,
2410,142153,1749,36171,642,0,N,N,N,CP_Drtn,TT_Task,DT_FixedDUR2,TK_NotStart,P4-MEP-EL-B1-2020,Cable Tray and Trunking Installation,,3032,104,168,0,504,504,168,9085.448617,0,9085.448617,,,,2015-12-14 08:00,2016-01-03 16:00,,2014-10-26 08:00,2014-11-20 16:00,2014-10-26 08:00,2014-11-20 16:00,2014-10-26 08:00,2014-11-20 16:00,2015-12-14 08:00,2016-01-03 16:00,,PT_Normal,,,,,OT/XMhep1E+CBGBGq7gegA,5e7dYyFZQjuV0QK+/bnhUw,,,N,0,0,,,2014-04-05 12:28,2014-04-05 13:21,admin,admin,
2411,142154,1749,36171,642,0,N,N,N,CP_Drtn,TT_Task,DT_FixedDUR2,TK_NotStart,P4-MEP-EL-B1-2070,Emergency Light Wiring,,2776,0,64,0,128,128,64,1210.028798,0,1210.028798,,,,2016-01-15 08:00,2016-01-22 16:00,,2015-01-13 08:00,2015-01-21 16:00,2015-01-13 08:00,2015-01-21 16:00,2015-01-13 08:00,2015-01-21 16:00,2016-01-15 08:00,2016-01-22 16:00,,PT_Normal,,,,,MPMgq+HMZE6Ut6a6cbkHvA,08lv1NHKRGWyNTo8HPZgpg,,,N,0,0,,,2014-04-05 12:28,2014-04-05 13:21,admin,admin,
2412,142155,1749,36171,642,0,N,N,N,CP_Drtn,TT_Task,DT_FixedDUR2,TK_NotStart,P4-MEP-EL-B1-2030,Fire Alarm System Wiring,,2920,144,96,0,192,192,96,7123.009694,0,7123.009694,,,,2016-01-11 08:00,2016-01-22 16:00,,2014-12-16 08:00,2014-12-29 16:00,2014-12-16 08:00,2014-12-29 16:00,2014-12-16 08:00,2014-12-29 16:00,2016-01-11 08:00,2016-01-22 16:00,,PT_Normal,,,,,xIYbMtsyGUuRX1Jv+A5fyQ,HBhjdpViT4uZg2MXLoTb0Q,,,N,0,0,,,2014-04-05 12:28,2014-04-05 13:21,admin,admin,
2413,142156,1749,36171,642,0,N,N,N,CP_Drtn,TT_Task,DT_FixedDUR2,TK_NotStart,P4-MEP-EL-B1-2000,DB's Installation and Termination,4455,3088,288,96,0,288,288,96,4982.925025,0,4982.925025,,,,2016-01-18 08:00,2016-01-29 16:00,,2014-11-30 08:00,2014-12-13 16:00,2014-11-30 08:00,2014-12-13 16:00,2014-11-30 08:00,2014-12-13 16:00,2016-01-18 08:00,2016-01-29 16:00,,PT_Normal,,,,,UutTMD7VSUK4yhTyrSmF3A,WZJvIKNkSbOI+LJvgKDf2w,,,N,0,0,,,2014-04-05 12:28,2014-04-05 13:21,admin,admin,
2414,142157,1749,36231,642,0,N,N,N,CP_Drtn,TT_Task,DT_FixedDUR2,TK_NotStart,P4-MEP-EL-B1-3020,Lights Fitting Fixing,,2800,2496,112,0,244,244,112,7336.659378,0,7336.659378,,,,2016-01-30 08:00,2016-02-12 16:00,,2015-01-27 08:00,2015-02-11 16:00,2015-01-27 08:00,2015-02-11 16:00,2015-01-27 08:00,2015-02-11 16:00,2016-01-30 08:00,2016-02-12 16:00,,PT_Normal,,,,,6QDprP1f5ESCWisqyn3VyA,XtYVWCSNT9SixCAz3xxllg,,,N,0,0,,,2014-04-05 12:28,2014-04-05 13:21,admin,admin,
2415,142158,1749,36231,642,0,N,N,N,CP_Drtn,TT_Task,DT_FixedDUR2,TK_NotStart,P4-MEP-EL-B1-3050,Sockets and Switches Fixing,,2376,0,64,0,128,128,64,1174.957134,0,1174.957134,,,,2016-02-04 08:00,2016-02-11 16:00,,2015-04-05 08:00,2015-04-13 16:00,2015-04-05 08:00,2015-04-13 16:00,2015-04-05 08:00,2015-04-13 16:00,2016-02-04 08:00,2016-02-11 16:00,,PT_Normal,,,,,x58c+iHiE0G88qAs4z8VLg,Dtd5d5GYQvyR7KLIN4SUiA,,,N,0,0,,,2014-04-05 12:28,2014-04-05 13:21,admin,admin,
2416,142159,1749,36231,642,0,N,N,N,CP_Drtn,TT_Task,DT_FixedDUR2,TK_NotStart,P4-MEP-EL-B1-3060,Emergency Light Fixing,,2376,848,64,0,128,128,64,5722.024623,0,5722.024623,,,,2016-02-04 08:00,2016-02-11 16:00,,2015-04-05 08:00,2015-04-13 16:00,2015-04-05 08:00,2015-04-13 16:00,2015-04-05 08:00,2015-04-13 16:00,2016-02-04 08:00,2016-02-11 16:00,,PT_Normal,,,,,mX15v/RJQEeDwjqPogFzVQ,QtLWfzAQRYq4F8gPt7UL7A,,,N,0,0,,,2014-04-05 12:28,2014-04-05 13:21,admin,admin,
2417,142160,1749,36231,642,0,N,N,N,CP_Drtn,TT_Task,DT_FixedDUR2,TK_NotStart,P4-MEP-EL-B1-3000,CO2 System Installation,,1568,888,48,0,179.65,179.65,48,21033.761938,0,21033.761938,,,,2016-02-11 08:00,2016-02-16 16:00,,2015-07-30 08:00,2015-08-04 16:00,2015-07-30 08:00,2015-08-04 16:00,2015-07-30 08:00,2015-08-04 16:00,2016-02-11 08:00,2016-02-16 16:00,,PT_Normal,,,,,vusZKbwXhkaL1tSF+/dB8Q,xu0MiyovQce1lFKZOggYSA,,,N,0,0,,,2014-04-05 12:28,2014-04-05 13:21,admin,admin,
2418,142161,1749,36231,642,0,N,N,N,CP_Drtn,TT_Task,DT_FixedDUR2,TK_NotStart,P4-MEP-EL-B1-3010,Fire Alarm System Detector Installation,,2776,400,96,0,192,192,96,4046.378277,0,4046.378277,,,,2016-01-23 08:00,2016-02-03 16:00,,2015-01-22 08:00,2015-02-04 16:00,2015-01-22 08:00,2015-02-04 16:00,2015-01-22 08:00,2015-02-04 16:00,2016-01-23 08:00,2016-02-03 16:00,,PT_Normal,,,,,RB3ej7b5XEad6O+NKjiKCQ,qO7o8K8YSe6mTp16dMd7Ig,,,N,0,0,,,2014-04-05 12:28,2014-04-05 13:21,admin,admin,
2419,142162,1749,36231,642,0,N,N,N,CP_Drtn,TT_Task,DT_FixedDUR2,TK_NotStart,P4-MEP-EL-B1-3030,"SMDB's  , MDB's Termination and Final Connection",,2800,0,96,0,384,384,96,20737.637079,0,20737.637079,,,,2016-01-18 08:00,2016-01-29 16:00,,2015-01-13 08:00,2015-01-26 16:00,2015-01-13 08:00,2015-01-26 16:00,2015-01-13 08:00,2015-01-26 16:00,2016-01-18 08:00,2016-01-29 16:00,,PT_Normal,,,,,b1ZNVriWkUy4TSXZFEj2Mg,PjwJPl37TpmRp4A+FtPFCQ,,,N,0,0,,,2014-04-05 12:28,2014-04-05 13:21,admin,admin,
2420,142163,1749,36171,642,0,N,N,N,CP_Drtn,TT_Task,DT_FixedDUR2,TK_NotStart,P4-MEP-EL-B1-3040,Power Cable Puling,,2928,128,112,0,168,168,112,13646.333768,0,13646.333768,,,,2016-01-04 08:00,2016-01-17 16:00,,2014-12-07 08:00,2014-12-22 16:00,2014-12-07 08:00,2014-12-22 16:00,2014-12-07 08:00,2014-12-22 16:00,2016-01-04 08:00,2016-01-17 16:00,,PT_Normal,,,,,k1KPrDMzf0euJ4ONH8qmMA,6dk+GUjrRpmuwE9Rd2Kd5Q,,,N,0,0,,,2014-04-05 12:28,2014-04-05 13:21,admin,admin,
2421,142164,1749,36523,642,0,N,N,N,CP_Drtn,TT_Task,DT_FixedDUR2,TK_NotStart,P5-MEP-PL-B2-2000,Parking Drain Installation,,2944,216,48,0,48,48,48,553.83323,0,553.83323,,,,2016-01-12 08:00,2016-01-17 16:00,,2014-12-14 08:00,2014-12-20 16:00,2014-12-14 08:00,2014-12-20 16:00,2014-12-14 08:00,2014-12-20 16:00,2016-01-12 08:00,2016-01-17 16:00,,PT_Normal,,,,,oeWTSXNAqkK3UTST3SBDOQ,LpX+Dkh1RGyDn7eaZsXDfA,,,N,0,0,,,2014-04-05 12:28,2014-04-05 13:21,admin,admin,
2422,142165,1749,36523,642,0,N,N,N,CP_Drtn,TT_Task,DT_FixedDUR2,TK_NotStart,P5-MEP-PL-B2-2030,High Level Water Supply Pipes and Fittings Installation,,2552,0,168,0,150.02,150.02,168,1329.597866,0,1329.597866,,,,2015-12-06 08:00,2015-12-26 16:00,,2014-12-28 08:00,2015-01-22 16:00,2014-12-28 08:00,2015-01-22 16:00,2014-12-28 08:00,2015-01-22 16:00,2015-12-06 08:00,2015-12-26 16:00,,PT_Normal,,,,,4DheLLGXL0a1RYy4CIG5Kg,2vM/rgNkTzmyi5bDwuUhGw,,,N,0,0,,,2014-04-05 12:28,2014-04-05 13:21,admin,admin,
2423,142166,1749,36523,642,0,N,N,N,CP_Drtn,TT_Task,DT_FixedDUR2,TK_NotStart,P5-MEP-PL-B2-2010,High Level Drainage Pipes Installation,,2608,0,168,0,244.38,244.38,168,6583.525267,0,6583.525267,,,,2015-12-13 08:00,2016-01-02 16:00,,2014-12-28 08:00,2015-01-22 16:00,2014-12-28 08:00,2015-01-22 16:00,2014-12-28 08:00,2015-01-22 16:00,2015-12-13 08:00,2016-01-02 16:00,,PT_Normal,,,,,Ml6vFMY0r0GA2gPjVePd/g,KtQs9x3WTRizWpS64bJZ7Q,,,N,0,0,,,2014-04-05 12:28,2014-04-05 13:21,admin,admin,
2424,142167,1749,36523,642,0,N,N,N,CP_Drtn,TT_Task,DT_FixedDUR2,TK_NotStart,P5-MEP-PL-B2-2040,Water Supply Pipes Pressure Test,4456,2672,288,48,0,48,48,48,151.744312,0,151.744312,,,,2016-01-11 08:00,2016-01-16 16:00,,2015-01-24 08:00,2015-01-29 16:00,2015-01-24 08:00,2015-01-29 16:00,2015-01-24 08:00,2015-01-29 16:00,2016-01-11 08:00,2016-01-16 16:00,,PT_Normal,,,,,TbWH6aE0hkSKmn5v7ox6EA,1yZ1ID0rROqiuM5kPUOLNg,,,N,0,0,,,2014-04-05 12:28,2014-04-05 13:21,admin,admin,
2425,142168,1749,36523,642,0,N,N,N,CP_Drtn,TT_Task,DT_FixedDUR2,TK_NotStart,P5-MEP-PL-B2-2020,Drainage Pipes Gravity Test,,2728,0,48,0,48,48,48,826.240719,0,826.240719,,,,2016-01-18 08:00,2016-01-23 16:00,,2015-01-24 08:00,2015-01-29 16:00,2015-01-24 08:00,2015-01-29 16:00,2015-01-24 08:00,2015-01-29 16:00,2016-01-18 08:00,2016-01-23 16:00,,PT_Normal,,,,,fCZ5+cXKF0KS3lRq7GefIw,p8/dqX+aSv66GT9oHfns7w,,,N,0,0,,,2014-04-05 12:28,2014-04-05 13:21,admin,admin,
2426,142169,1749,36286,642,0,N,N,N,CP_Drtn,TT_Task,DT_FixedDUR2,TK_NotStart,P5-MEP-EL-B2-1010,PVC Back Boxes and Conduits  Fixing in Wall,,2528,0,96,0,384,384,96,3319.67233,0,3319.67233,,,,2015-11-21 08:00,2015-12-02 16:00,,2014-12-14 08:00,2014-12-27 16:00,2014-12-14 08:00,2014-12-27 16:00,2014-12-14 08:00,2014-12-27 16:00,2015-11-21 08:00,2015-12-02 16:00,,PT_Normal,,,,,ixCskSRB8UmH5HWbT7q4JQ,7ANLOm7sS8O9GJsybzWQPg,,,N,0,0,,,2014-04-05 12:28,2014-04-05 13:21,admin,admin,
2427,142170,1749,36286,642,0,N,N,N,CP_Drtn,TT_Task,DT_FixedDUR2,TK_NotStart,P5-MEP-EL-B2-1000,DB's Inclosure Fixing,4455,2528,0,48,0,96,96,48,2136.399392,0,2136.399392,,,,2015-12-03 08:00,2015-12-08 16:00,,2014-12-28 08:00,2015-01-05 16:00,2014-12-28 08:00,2015-01-05 16:00,2014-12-28 08:00,2015-01-05 16:00,2015-12-03 08:00,2015-12-08 16:00,,PT_Normal,,,,,EHZDBq8YGUu8TLhSscolxg,hjzy7a7QQiudO5lryVDDVg,,,N,0,0,,,2014-04-05 12:28,2014-04-05 13:21,admin,admin,
2428,142171,1749,36255,642,0,N,N,N,CP_Drtn,TT_Task,DT_FixedDUR2,TK_NotStart,P5-MEP-EL-B2-2010,SMDB's Installation,,2752,208,48,0,48,48,48,4976.925025,0,4976.925025,,,,2015-12-31 08:00,2016-01-05 16:00,,2014-12-28 08:00,2015-01-05 16:00,2014-12-28 08:00,2015-01-05 16:00,2014-12-28 08:00,2015-01-05 16:00,2015-12-31 08:00,2016-01-05 16:00,,PT_Normal,,,,,9eLtvSydl024xXq4JQiLgw,2ec60z6lSsmbm+ngVFlg/w,,,N,0,0,,,2014-04-05 12:28,2014-04-05 13:21,admin,admin,
2429,142172,1749,36255,642,0,N,N,N,CP_Drtn,TT_Task,DT_FixedDUR2,TK_NotStart,P5-MEP-EL-B2-2060,BMS System Wiring,,2768,192,64,0,186,186,64,15191.435697,0,15191.435697,,,,2016-01-02 08:00,2016-01-09 16:00,,2014-12-28 08:00,2015-01-07 16:00,2014-12-28 08:00,2015-01-07 16:00,2014-12-28 08:00,2015-01-07 16:00,2016-01-02 08:00,2016-01-09 16:00,,PT_Normal,,,,,D/t1cd1k4EyfSSqlk91Djg,BhlXKMp8QOyYcHvU0w7rfg,,,N,0,0,,,2014-04-05 12:28,2014-04-05 13:21,admin,admin,
2430,142173,1749,36255,642,0,N,N,N,CP_Drtn,TT_Task,DT_FixedDUR2,TK_NotStart,P5-MEP-EL-B2-2040,Lighting  Wiring,,2576,48,96,0,241.713,241.713,96,3578.08423,0,3578.08423,,,,2015-12-09 08:00,2015-12-20 16:00,,2014-12-28 08:00,2015-01-12 16:00,2014-12-28 08:00,2015-01-12 16:00,2014-12-28 08:00,2015-01-12 16:00,2015-12-09 08:00,2015-12-20 16:00,,PT_Normal,,,,,qHTSjd4DWkSJu2ervUsKRw,BLCHu1T5TpyBTSJ+66ZmnQ,,,N,0,0,,,2014-04-05 12:28,2014-04-05 13:21,admin,admin,
2431,142174,1749,36255,642,0,N,N,N,CP_Drtn,TT_Task,DT_FixedDUR2,TK_NotStart,P5-MEP-EL-B2-2050,Power Points Wiring,,2576,48,96,0,192,192,96,2906.213289,0,2906.213289,,,,2015-12-09 08:00,2015-12-20 16:00,,2014-12-28 08:00,2015-01-12 16:00,2014-12-28 08:00,2015-01-12 16:00,2014-12-28 08:00,2015-01-12 16:00,2015-12-09 08:00,2015-12-20 16:00,,PT_Normal,,,,,dnJt8ywwt0KvZbdySPd6Bw,xGk3PaXeRbSR/nYcRKfd2A,,,N,0,0,,,2014-04-05 12:28,2014-04-05 13:21,admin,admin,
2432,142175,1749,36255,642,0,N,N,N,CP_Drtn,TT_Task,DT_FixedDUR2,TK_NotStart,P5-MEP-EL-B2-2020,Cable Tray and Trunking Installation,,2544,72,168,0,504,504,168,9085.448617,0,9085.448617,,,,2015-11-23 08:00,2015-12-13 16:00,,2014-12-14 08:00,2015-01-08 16:00,2014-12-14 08:00,2015-01-08 16:00,2014-12-14 08:00,2015-01-08 16:00,2015-11-23 08:00,2015-12-13 16:00,,PT_Normal,,,,,FlPR/8QxBkKGurbhNFUyXQ,7/rZelHLRxm3aLf9CV+Mrg,,,N,0,0,,,2014-04-05 12:28,2014-04-05 13:21,admin,admin,
2433,142176,1749,36255,642,0,N,N,N,CP_Drtn,TT_Task,DT_FixedDUR2,TK_NotStart,P5-MEP-EL-B2-2070,Emergency Light Wiring,,2904,272,64,0,128,128,64,1210.028798,0,1210.028798,,,,2016-01-19 08:00,2016-01-26 16:00,,2014-12-28 08:00,2015-01-07 16:00,2014-12-28 08:00,2015-01-07 16:00,2014-12-28 08:00,2015-01-07 16:00,2016-01-19 08:00,2016-01-26 16:00,,PT_Normal,,,,,YgbGZJ6I10m0d3+aBYPdow,TG4eQ73gTtSohoTuSZCqTg,,,N,0,0,,,2014-04-05 12:28,2014-04-05 13:21,admin,admin,
2434,142177,1749,36255,642,0,N,N,N,CP_Drtn,TT_Task,DT_FixedDUR2,TK_NotStart,P5-MEP-EL-B2-2030,Fire Alarm System Wiring,,2744,0,96,0,192,192,96,7123.009694,0,7123.009694,,,,2015-12-30 08:00,2016-01-10 16:00,,2014-12-28 08:00,2015-01-12 16:00,2014-12-28 08:00,2015-01-12 16:00,2014-12-28 08:00,2015-01-12 16:00,2015-12-30 08:00,2016-01-10 16:00,,PT_Normal,,,,,NdPvjoRXgE6Gf3XXIYQpIA,82ABJMXFT3a7KUN+vW7SXQ,,,N,0,0,,,2014-04-05 12:28,2014-04-05 13:21,admin,admin,
2435,142178,1749,36255,642,0,N,N,N,CP_Drtn,TT_Task,DT_FixedDUR2,TK_NotStart,P5-MEP-EL-B2-2000,DB's Installation and Termination,4455,2528,0,96,0,288,288,96,4982.925025,0,4982.925025,,,,2015-12-09 08:00,2015-12-20 16:00,,2015-01-06 08:00,2015-01-19 16:00,2015-01-06 08:00,2015-01-19 16:00,2015-01-06 08:00,2015-01-19 16:00,2015-12-09 08:00,2015-12-20 16:00,,PT_Normal,,,,,1XZxPj4j3USkopp38gDoCg,i46VzXMTTTCTjUMvgjlAuw,,,N,0,0,,,2014-04-05 12:28,2014-04-05 13:21,admin,admin,
2436,142179,1749,36316,642,0,N,N,N,CP_Drtn,TT_Task,DT_FixedDUR2,TK_NotStart,P5-MEP-EL-B2-3020,Lights Fitting Fixing,,2576,272,112,0,244,244,112,7336.659378,0,7336.659378,,,,2016-01-16 08:00,2016-01-29 16:00,,2015-02-12 08:00,2015-02-28 16:00,2015-02-12 08:00,2015-02-28 16:00,2015-02-12 08:00,2015-02-28 16:00,2016-01-16 08:00,2016-01-29 16:00,,PT_Normal,,,,,g++PqF/sA0e2G/lnEk3v2w,eXJ7Gb/xQeeDO3FC3w7GYQ,,,N,0,0,,,2014-04-05 12:28,2014-04-05 13:21,admin,admin,
2437,142180,1749,36316,642,0,N,N,N,CP_Drtn,TT_Task,DT_FixedDUR2,TK_NotStart,P5-MEP-EL-B2-3050,Sockets and Switches Fixing,,2376,0,64,0,128,128,64,1174.957134,0,1174.957134,,,,2016-01-27 08:00,2016-02-03 16:00,,2015-03-26 08:00,2015-04-04 16:00,2015-03-26 08:00,2015-04-04 16:00,2015-03-26 08:00,2015-04-04 16:00,2016-01-27 08:00,2016-02-03 16:00,,PT_Normal,,,,,KWwrXMIDNk6aVKvPWW2CJw,AM3YztXEQYu9vgAaw6J85g,,,N,0,0,,,2014-04-05 12:28,2014-04-05 13:21,admin,admin,
2438,142181,1749,36316,642,0,N,N,N,CP_Drtn,TT_Task,DT_FixedDUR2,TK_NotStart,P5-MEP-EL-B2-3060,Emergency Light Fixing,,2376,0,64,0,128,128,64,5722.024623,0,5722.024623,,,,2016-01-27 08:00,2016-02-03 16:00,,2015-03-26 08:00,2015-04-04 16:00,2015-03-26 08:00,2015-04-04 16:00,2015-03-26 08:00,2015-04-04 16:00,2016-01-27 08:00,2016-02-03 16:00,,PT_Normal,,,,,5huYfY7IWU2MsGNPvuOYEg,jBWpHQvQSn6Y6xWigXxlBw,,,N,0,0,,,2014-04-05 12:28,2014-04-05 13:21,admin,admin,
2439,142182,1749,36316,642,0,N,N,N,CP_Drtn,TT_Task,DT_FixedDUR2,TK_NotStart,P5-MEP-EL-B2-3000,CO2 System Installation,,2432,16,48,0,179.65,179.65,48,21033.761938,0,21033.761938,,,,2016-02-05 08:00,2016-02-10 16:00,,2015-03-29 08:00,2015-04-04 16:00,2015-03-29 08:00,2015-04-04 16:00,2015-03-29 08:00,2015-04-04 16:00,2016-02-05 08:00,2016-02-10 16:00,,PT_Normal,,,,,1KQfOpngi0uWq1X3zsbduw,ch8TPtvrS16+U75eYooPWw,,,N,0,0,,,2014-04-05 12:28,2014-04-05 13:21,admin,admin,
2440,142183,1749,36316,642,0,N,N,N,CP_Drtn,TT_Task,DT_FixedDUR2,TK_NotStart,P5-MEP-EL-B2-3010,Fire Alarm System Detector Installation,,2744,240,96,0,192,192,96,4046.378277,0,4046.378277,,,,2016-01-11 08:00,2016-01-22 16:00,,2015-01-13 08:00,2015-01-26 16:00,2015-01-13 08:00,2015-01-26 16:00,2015-01-13 08:00,2015-01-26 16:00,2016-01-11 08:00,2016-01-22 16:00,,PT_Normal,,,,,RKEXTc3/KEm/hUA7DA+5Kg,YMI6PQYDTS2tTt2I0XzSsQ,,,N,0,0,,,2014-04-05 12:28,2014-04-05 13:21,admin,admin,
2441,142184,1749,36316,642,0,N,N,N,CP_Drtn,TT_Task,DT_FixedDUR2,TK_NotStart,P5-MEP-EL-B2-3030,SMDB's  Termination and Final Connection,,2576,0,48,0,192,192,48,2791.825001,0,2791.825001,,,,2016-01-10 08:00,2016-01-15 16:00,,2015-02-05 08:00,2015-02-11 16:00,2015-02-05 08:00,2015-02-11 16:00,2015-02-05 08:00,2015-02-11 16:00,2016-01-10 08:00,2016-01-15 16:00,,PT_Normal,,,,,LirHAci42EG33gOKsjdSPg,PmrXqUv0SlexAi3v/kkqkg,,,N,0,0,,,2014-04-05 12:28,2014-04-05 13:21,admin,admin,
2442,142185,1749,36255,642,0,N,N,N,CP_Drtn,TT_Task,DT_FixedDUR2,TK_NotStart,P5-MEP-EL-B2-3040,Power Cable Puling,,2528,0,112,0,168,168,112,13646.333768,0,13646.333768,,,,2015-12-21 08:00,2016-01-03 16:00,,2015-01-20 08:00,2015-02-04 16:00,2015-01-20 08:00,2015-02-04 16:00,2015-01-20 08:00,2015-02-04 16:00,2015-12-21 08:00,2016-01-03 16:00,,PT_Normal,,,,,MwtSeSQnWUWKl+gNM+SgUA,ADm37rdOQLeB7w1cruV6Og,,,N,0,0,,,2014-04-05 12:28,2014-04-05 13:21,admin,admin,
2443,142186,1749,36498,642,0,N,N,N,CP_Drtn,TT_Task,DT_FixedDUR2,TK_NotStart,P5-MEP-PL-B1-2000,Parking Drain Installation,,2656,216,48,0,48,48,48,553.83323,0,553.83323,,,,2016-01-18 08:00,2016-01-23 16:00,,2015-02-03 08:00,2015-02-09 16:00,2015-02-03 08:00,2015-02-09 16:00,2015-02-03 08:00,2015-02-09 16:00,2016-01-18 08:00,2016-01-23 16:00,,PT_Normal,,,,,GIezAOABDkSp3VBofIbQZg,VWrEOabsRyezkJnCWIqgYA,,,N,0,0,,,2014-04-05 12:28,2014-04-05 13:21,admin,admin,
2444,142187,1749,36498,642,0,N,N,N,CP_Drtn,TT_Task,DT_FixedDUR2,TK_NotStart,P5-MEP-PL-B1-2030,High Level Water Supply Pipes and Fittings Installation,,2384,0,168,0,150.02,150.02,168,1329.597866,0,1329.597866,,,,2015-12-27 08:00,2016-01-16 16:00,,2015-02-17 08:00,2015-03-12 16:00,2015-02-17 08:00,2015-03-12 16:00,2015-02-17 08:00,2015-03-12 16:00,2015-12-27 08:00,2016-01-16 16:00,,PT_Normal,,,,,m7KY5Z+8Ck6i45pKCjgv2Q,A9fRXsI+QkG8MLO32uEO1g,,,N,0,0,,,2014-04-05 12:28,2014-04-05 13:21,admin,admin,
2445,142188,1749,36498,642,0,N,N,N,CP_Drtn,TT_Task,DT_FixedDUR2,TK_NotStart,P5-MEP-PL-B1-2010,High Level Drainage Pipes Installation,,2440,0,168,0,244.38,244.38,168,6583.525267,0,6583.525267,,,,2016-01-03 08:00,2016-01-23 16:00,,2015-02-17 08:00,2015-03-12 16:00,2015-02-17 08:00,2015-03-12 16:00,2015-02-17 08:00,2015-03-12 16:00,2016-01-03 08:00,2016-01-23 16:00,,PT_Normal,,,,,EtGwNU6Fr0CchLgRrJikfA,TD6b8UyHSD+gNSOKw1W/BQ,,,N,0,0,,,2014-04-05 12:28,2014-04-05 13:21,admin,admin,
2446,142189,1749,36498,642,0,N,N,N,CP_Drtn,TT_Task,DT_FixedDUR2,TK_NotStart,P5-MEP-PL-B1-2040,Water Supply Pipes Pressure Test,4456,2384,1904,48,0,48,48,48,151.744312,0,151.744312,,,,2016-01-17 08:00,2016-01-22 16:00,,2015-03-14 08:00,2015-03-19 16:00,2015-03-14 08:00,2015-03-19 16:00,2015-03-14 08:00,2015-03-19 16:00,2016-01-17 08:00,2016-01-22 16:00,,PT_Normal,,,,,CcBHDjOWfUOm+fh1sMcK6Q,DO54805VStecnZJsjQh45Q,,,N,0,0,,,2014-04-05 12:28,2014-04-05 13:21,admin,admin,
2447,142190,1749,36498,642,0,N,N,N,CP_Drtn,TT_Task,DT_FixedDUR2,TK_NotStart,P5-MEP-PL-B1-2020,Drainage Pipes Gravity Test,,2440,0,48,0,48,48,48,826.240719,0,826.240719,,,,2016-01-24 08:00,2016-01-29 16:00,,2015-03-14 08:00,2015-03-19 16:00,2015-03-14 08:00,2015-03-19 16:00,2015-03-14 08:00,2015-03-19 16:00,2016-01-24 08:00,2016-01-29 16:00,,PT_Normal,,,,,cUY6oj9LBEqG7MpugNFH3Q,C6MAGo+URv+JvJnt9N6Htw,,,N,0,0,,,2014-04-05 12:28,2014-04-05 13:21,admin,admin,
2448,142191,1749,36196,642,0,N,N,N,CP_Drtn,TT_Task,DT_FixedDUR2,TK_NotStart,P5-MEP-EL-B1-1010,PVC Back Boxes and Conduits  Fixing in Wall,,2304,0,96,0,384,384,96,3319.67233,0,3319.67233,,,,2015-12-05 08:00,2015-12-16 16:00,,2015-02-03 08:00,2015-02-16 16:00,2015-02-03 08:00,2015-02-16 16:00,2015-02-03 08:00,2015-02-16 16:00,2015-12-05 08:00,2015-12-16 16:00,,PT_Normal,,,,,nF4gEdIQAk+5k6io3ZBL0A,WHwANar6TI6EqBoAQGU1bw,,,N,0,0,,,2014-04-05 12:28,2014-04-05 13:21,admin,admin,
2449,142192,1749,36196,642,0,N,N,N,CP_Drtn,TT_Task,DT_FixedDUR2,TK_NotStart,P5-MEP-EL-B1-1000,DB's Inclosure Fixing,4455,2304,0,48,0,96,96,48,2136.399392,0,2136.399392,,,,2015-12-17 08:00,2015-12-22 16:00,,2015-02-17 08:00,2015-02-23 16:00,2015-02-17 08:00,2015-02-23 16:00,2015-02-17 08:00,2015-02-23 16:00,2015-12-17 08:00,2015-12-22 16:00,,PT_Normal,,,,,zac2fnIpkUWBWYagXTv77g,arS9ozz5RJqCxUuQOTDiwA,,,N,0,0,,,2014-04-05 12:28,2014-04-05 13:21,admin,admin,
2450,142193,1749,36089,642,0,N,N,N,CP_Drtn,TT_Task,DT_FixedDUR2,TK_NotStart,P5-MEP-EL-B1-2010,"SMDB's , MDB's  Installation",,2464,160,96,0,336,336,96,4208.598932,0,4208.598932,,,,2016-01-06 08:00,2016-01-17 16:00,,2015-02-17 08:00,2015-03-02 16:00,2015-02-17 08:00,2015-03-02 16:00,2015-02-17 08:00,2015-03-02 16:00,2016-01-06 08:00,2016-01-17 16:00,,PT_Normal,,,,,mo8KmvY0OUyBe5rIuslmzw,pAAiOTVBTPyyWK+Bf/R3Rw,,,N,0,0,,,2014-04-05 12:28,2014-04-05 13:21,admin,admin,
2451,142194,1749,36089,642,0,N,N,N,CP_Drtn,TT_Task,DT_FixedDUR2,TK_NotStart,P5-MEP-EL-B1-2060,BMS System Wiring,,2448,144,64,0,186,186,64,15191.435697,0,15191.435697,,,,2016-01-22 08:00,2016-01-29 16:00,,2015-03-10 08:00,2015-03-18 16:00,2015-03-10 08:00,2015-03-18 16:00,2015-03-10 08:00,2015-03-18 16:00,2016-01-22 08:00,2016-01-29 16:00,,PT_Normal,,,,,cXN8hC5n4kCk2BGPMbg9YQ,aFayh1dKRy28KVtIfyjJ9A,,,N,0,0,,,2014-04-05 12:28,2014-04-05 13:21,admin,admin,
2452,142195,1749,36089,642,0,N,N,N,CP_Drtn,TT_Task,DT_FixedDUR2,TK_NotStart,P5-MEP-EL-B1-2040,Lighting  Wiring,,2352,48,96,0,241.713,241.713,96,3578.08423,0,3578.08423,,,,2015-12-23 08:00,2016-01-03 16:00,,2015-02-17 08:00,2015-03-02 16:00,2015-02-17 08:00,2015-03-02 16:00,2015-02-17 08:00,2015-03-02 16:00,2015-12-23 08:00,2016-01-03 16:00,,PT_Normal,,,,,PO4DtHfROU+CtgkfnkYoww,lk0Sl0eeSeWyYaHCgvWeKg,,,N,0,0,,,2014-04-05 12:28,2014-04-05 13:21,admin,admin,
2453,142196,1749,36089,642,0,N,N,N,CP_Drtn,TT_Task,DT_FixedDUR2,TK_NotStart,P5-MEP-EL-B1-2050,Power Points Wiring,,2352,48,96,0,192,192,96,2906.213289,0,2906.213289,,,,2015-12-23 08:00,2016-01-03 16:00,,2015-02-17 08:00,2015-03-02 16:00,2015-02-17 08:00,2015-03-02 16:00,2015-02-17 08:00,2015-03-02 16:00,2015-12-23 08:00,2016-01-03 16:00,,PT_Normal,,,,,o2EQlaKU/0Cb+1+uHAIVrA,TBDyPsk2RZ2xlLBD7wfKQw,,,N,0,0,,,2014-04-05 12:28,2014-04-05 13:21,admin,admin,
2454,142197,1749,36089,642,0,N,N,N,CP_Drtn,TT_Task,DT_FixedDUR2,TK_NotStart,P5-MEP-EL-B1-2020,Cable Tray and Trunking Installation,,2376,72,168,0,504,504,168,9085.448617,0,9085.448617,,,,2015-12-14 08:00,2016-01-03 16:00,,2015-02-03 08:00,2015-02-26 16:00,2015-02-03 08:00,2015-02-26 16:00,2015-02-03 08:00,2015-02-26 16:00,2015-12-14 08:00,2016-01-03 16:00,,PT_Normal,,,,,/rflLg9f2EmunP2ck0H+Ew,Q9xjaKSdT9CyBIAgTESuXQ,,,N,0,0,,,2014-04-05 12:28,2014-04-05 13:21,admin,admin,
2455,142198,1749,36089,642,0,N,N,N,CP_Drtn,TT_Task,DT_FixedDUR2,TK_NotStart,P5-MEP-EL-B1-2070,Emergency Light Wiring,,2632,256,64,0,128,128,64,1210.028798,0,1210.028798,,,,2016-01-27 08:00,2016-02-03 16:00,,2015-02-17 08:00,2015-02-25 16:00,2015-02-17 08:00,2015-02-25 16:00,2015-02-17 08:00,2015-02-25 16:00,2016-01-27 08:00,2016-02-03 16:00,,PT_Normal,,,,,MtRHoq7wskiVcZR1Ca+GDQ,Byv1LJcjTR6n5dPd1D33tw,,,N,0,0,,,2014-04-05 12:28,2014-04-05 13:21,admin,admin,
2456,142199,1749,36089,642,0,N,N,N,CP_Drtn,TT_Task,DT_FixedDUR2,TK_NotStart,P5-MEP-EL-B1-2030,Fire Alarm System Wiring,,2504,0,96,0,192,192,96,7123.009694,0,7123.009694,,,,2016-01-11 08:00,2016-01-22 16:00,,2015-02-17 08:00,2015-03-02 16:00,2015-02-17 08:00,2015-03-02 16:00,2015-02-17 08:00,2015-03-02 16:00,2016-01-11 08:00,2016-01-22 16:00,,PT_Normal,,,,,Fc/geZ3h6kSAOcbMxPrQBg,jXeIgxpqTnmUt/nqbs/Kew,,,N,0,0,,,2014-04-05 12:28,2014-04-05 13:21,admin,admin,
2457,142200,1749,36089,642,0,N,N,N,CP_Drtn,TT_Task,DT_FixedDUR2,TK_NotStart,P5-MEP-EL-B1-2000,DB's Installation and Termination,4455,2304,0,96,0,288,288,96,4982.925025,0,4982.925025,,,,2015-12-23 08:00,2016-01-03 16:00,,2015-02-24 08:00,2015-03-09 16:00,2015-02-24 08:00,2015-03-09 16:00,2015-02-24 08:00,2015-03-09 16:00,2015-12-23 08:00,2016-01-03 16:00,,PT_Normal,,,,,ppHdIsl5jEe7NUw7ZtrkKA,zeYix5XCQLuFLA2RqlFPiw,,,N,0,0,,,2014-04-05 12:28,2014-04-05 13:21,admin,admin,
2458,142201,1749,36256,642,0,N,N,N,CP_Drtn,TT_Task,DT_FixedDUR2,TK_NotStart,P5-MEP-EL-B1-3020,Lights Fitting Fixing,,2304,2000,112,0,244,244,112,7336.659378,0,7336.659378,,,,2016-01-30 08:00,2016-02-12 16:00,,2015-04-09 08:00,2015-04-25 16:00,2015-04-09 08:00,2015-04-25 16:00,2015-04-09 08:00,2015-04-25 16:00,2016-01-30 08:00,2016-02-12 16:00,,PT_Normal,,,,,Jez3L6JQ1UqWK20C24WSWg,QdOsTT8HRc2Kd6HyAQDVPw,,,N,0,0,,,2014-04-05 12:28,2014-04-05 13:21,admin,admin,
2459,142202,1749,36256,642,0,N,N,N,CP_Drtn,TT_Task,DT_FixedDUR2,TK_NotStart,P5-MEP-EL-B1-3050,Sockets and Switches Fixing,,2376,0,64,0,128,128,64,1174.957134,0,1174.957134,,,,2016-02-04 08:00,2016-02-11 16:00,,2015-04-05 08:00,2015-04-13 16:00,2015-04-05 08:00,2015-04-13 16:00,2015-04-05 08:00,2015-04-13 16:00,2016-02-04 08:00,2016-02-11 16:00,,PT_Normal,,,,,Gzmbla6KlkO3I/omPeyNMA,bcNR8LANTP21mL+ONuDzww,,,N,0,0,,,2014-04-05 12:28,2014-04-05 13:21,admin,admin,
2460,142203,1749,36256,642,0,N,N,N,CP_Drtn,TT_Task,DT_FixedDUR2,TK_NotStart,P5-MEP-EL-B1-3060,Emergency Light Fixing,,2376,0,64,0,128,128,64,5722.024623,0,5722.024623,,,,2016-02-04 08:00,2016-02-11 16:00,,2015-04-05 08:00,2015-04-13 16:00,2015-04-05 08:00,2015-04-13 16:00,2015-04-05 08:00,2015-04-13 16:00,2016-02-04 08:00,2016-02-11 16:00,,PT_Normal,,,,,U+gsiqm5c02iqVd2z9+E6A,sFFJ99kmSzSeK4Pl/ru95Q,,,N,0,0,,,2014-04-05 12:28,2014-04-05 13:21,admin,admin,
2461,142204,1749,36256,642,0,N,N,N,CP_Drtn,TT_Task,DT_FixedDUR2,TK_NotStart,P5-MEP-EL-B1-3000,CO2 System Installation,,2416,1736,48,0,179.65,179.65,48,21033.761938,0,21033.761938,,,,2016-02-11 08:00,2016-02-16 16:00,,2015-04-07 08:00,2015-04-13 16:00,2015-04-07 08:00,2015-04-13 16:00,2015-04-07 08:00,2015-04-13 16:00,2016-02-11 08:00,2016-02-16 16:00,,PT_Normal,,,,,lkiOZ9xNLkiW6kfbFblnEg,YCfU2cJWQ6OBG1H+llqFHw,,,N,0,0,,,2014-04-05 12:28,2014-04-05 13:21,admin,admin,
2462,142205,1749,36256,642,0,N,N,N,CP_Drtn,TT_Task,DT_FixedDUR2,TK_NotStart,P5-MEP-EL-B1-3010,Fire Alarm System Detector Installation,,2504,128,96,0,192,192,96,4046.378277,0,4046.378277,,,,2016-01-23 08:00,2016-02-03 16:00,,2015-03-03 08:00,2015-03-16 16:00,2015-03-03 08:00,2015-03-16 16:00,2015-03-03 08:00,2015-03-16 16:00,2016-01-23 08:00,2016-02-03 16:00,,PT_Normal,,,,,HPBrYAI6Tky9LQtuSN/cVA,4Q6E4mgZRxq33lzBZdK5Lg,,,N,0,0,,,2014-04-05 12:28,2014-04-05 13:21,admin,admin,
2463,142206,1749,36256,642,0,N,N,N,CP_Drtn,TT_Task,DT_FixedDUR2,TK_NotStart,P5-MEP-EL-B1-3030,"SMDB's  , MDB's Termination and Final Connection",,2304,0,96,0,384,384,96,20737.637079,0,20737.637079,,,,2016-01-18 08:00,2016-01-29 16:00,,2015-03-26 08:00,2015-04-08 16:00,2015-03-26 08:00,2015-04-08 16:00,2015-03-26 08:00,2015-04-08 16:00,2016-01-18 08:00,2016-01-29 16:00,,PT_Normal,,,,,g9S+fdSEEEqtANosf5jYkQ,DOBCjBoeQ+usr4gfOZJxUQ,,,N,0,0,,,2014-04-05 12:28,2014-04-05 13:21,admin,admin,
2464,142207,1749,36089,642,0,N,N,N,CP_Drtn,TT_Task,DT_FixedDUR2,TK_NotStart,P5-MEP-EL-B1-3040,Power Cable Puling,,2304,0,112,0,168,168,112,13646.333768,0,13646.333768,,,,2016-01-04 08:00,2016-01-17 16:00,,2015-03-10 08:00,2015-03-25 16:00,2015-03-10 08:00,2015-03-25 16:00,2015-03-10 08:00,2015-03-25 16:00,2016-01-04 08:00,2016-01-17 16:00,,PT_Normal,,,,,W6zauJddcUuh+UHhyjx02A,dnnZJoshRzacllopoOLq2g,,,N,0,0,,,2014-04-05 12:28,2014-04-05 13:21,admin,admin,
2465,142208,1749,36589,642,0,N,N,N,CP_Drtn,TT_Task,DT_FixedDUR2,TK_NotStart,P6-MEP-PL-B2-2000,Parking Drain Installation,,2240,216,48,0,48,48,48,553.83323,0,553.83323,,,,2016-01-12 08:00,2016-01-17 16:00,,2015-03-29 08:00,2015-04-04 16:00,2015-03-29 08:00,2015-04-04 16:00,2015-03-29 08:00,2015-04-04 16:00,2016-01-12 08:00,2016-01-17 16:00,,PT_Normal,,,,,cxU/LSmEV0GAkUFT07D3sg,DryY3nleSeqd1Q2Or6hwFw,,,N,0,0,,,2014-04-05 12:28,2014-04-05 13:21,admin,admin,
2466,142209,1749,36589,642,0,N,N,N,CP_Drtn,TT_Task,DT_FixedDUR2,TK_NotStart,P6-MEP-PL-B2-2030,High Level Water Supply Pipes and Fittings Installation,,1848,0,168,0,150.02,150.02,168,1329.597866,0,1329.597866,,,,2015-12-06 08:00,2015-12-26 16:00,,2015-04-12 08:00,2015-05-05 16:00,2015-04-12 08:00,2015-05-05 16:00,2015-04-12 08:00,2015-05-05 16:00,2015-12-06 08:00,2015-12-26 16:00,,PT_Normal,,,,,6A2+5+SkN0+z3Am3xX/+8w,hpwXRD0KTAG+opWecUab+w,,,N,0,0,,,2014-04-05 12:28,2014-04-05 13:21,admin,admin,
2467,142210,1749,36589,642,0,N,N,N,CP_Drtn,TT_Task,DT_FixedDUR2,TK_NotStart,P6-MEP-PL-B2-2010,High Level Drainage Pipes Installation,,1904,0,168,0,244.38,244.38,168,6583.525267,0,6583.525267,,,,2015-12-13 08:00,2016-01-02 16:00,,2015-04-12 08:00,2015-05-05 16:00,2015-04-12 08:00,2015-05-05 16:00,2015-04-12 08:00,2015-05-05 16:00,2015-12-13 08:00,2016-01-02 16:00,,PT_Normal,,,,,z8zKjgOFXUSQuIv0sG/JDg,85IJIKVgQHejIx2raGocwQ,,,N,0,0,,,2014-04-05 12:28,2014-04-05 13:21,admin,admin,
2468,142211,1749,36589,642,0,N,N,N,CP_Drtn,TT_Task,DT_FixedDUR2,TK_NotStart,P6-MEP-PL-B2-2040,Water Supply Pipes Pressure Test,4456,1968,288,48,0,48,48,48,151.744312,0,151.744312,,,,2016-01-11 08:00,2016-01-16 16:00,,2015-05-06 08:00,2015-05-12 16:00,2015-05-06 08:00,2015-05-12 16:00,2015-05-06 08:00,2015-05-12 16:00,2016-01-11 08:00,2016-01-16 16:00,,PT_Normal,,,,,av4pp4lWWkemZmngv7CTFg,VkqJc4TaR1aP+4UlSrjUUA,,,N,0,0,,,2014-04-05 12:28,2014-04-05 13:21,admin,admin,
2469,142212,1749,36589,642,0,N,N,N,CP_Drtn,TT_Task,DT_FixedDUR2,TK_NotStart,P6-MEP-PL-B2-2020,Drainage Pipes Gravity Test,,2024,0,48,0,48,48,48,826.240719,0,826.240719,,,,2016-01-18 08:00,2016-01-23 16:00,,2015-05-06 08:00,2015-05-12 16:00,2015-05-06 08:00,2015-05-12 16:00,2015-05-06 08:00,2015-05-12 16:00,2016-01-18 08:00,2016-01-23 16:00,,PT_Normal,,,,,px2uC0xMNUK7MLKWjOgfMw,Q++nvqX3SsyZPd9rP5bNHQ,,,N,0,0,,,2014-04-05 12:28,2014-04-05 13:21,admin,admin,
2470,142213,1749,36284,642,0,N,N,N,CP_Drtn,TT_Task,DT_FixedDUR2,TK_NotStart,P6-MEP-EL-B2-1010,PVC Back Boxes and Conduits  Fixing in Wall,,1144,0,96,0,384,384,96,3319.67233,0,3319.67233,,,,2015-08-28 08:00,2015-09-08 16:00,,2015-03-29 08:00,2015-04-11 16:00,2015-03-29 08:00,2015-04-11 16:00,2015-03-29 08:00,2015-04-11 16:00,2015-08-28 08:00,2015-09-08 16:00,,PT_Normal,,,,,YMF/U2uM1E6Wiv9otFXqDw,khHt47fdQr6ataU5JaxtYw,,,N,0,0,,,2014-04-05 12:28,2014-04-05 13:21,admin,admin,
2471,142214,1749,36284,642,0,N,N,N,CP_Drtn,TT_Task,DT_FixedDUR2,TK_NotStart,P6-MEP-EL-B2-1000,DB's Inclosure Fixing,4455,1288,0,48,0,96,96,48,2136.399392,0,2136.399392,,,,2015-09-27 08:00,2015-10-02 16:00,,2015-04-12 08:00,2015-04-18 16:00,2015-04-12 08:00,2015-04-18 16:00,2015-04-12 08:00,2015-04-18 16:00,2015-09-27 08:00,2015-10-02 16:00,,PT_Normal,,,,,mOc6bUCuL0qK6ssfldNPeA,PPOmI81/RcK+nfVHEttAhQ,,,N,0,0,,,2014-04-05 12:28,2014-04-05 13:21,admin,admin,
2472,142215,1749,36242,642,0,N,N,N,CP_Drtn,TT_Task,DT_FixedDUR2,TK_NotStart,P6-MEP-EL-B2-2010,SMDB's Installation,,1488,232,48,0,48,48,48,4976.925025,0,4976.925025,,,,2015-11-15 08:00,2015-11-20 16:00,,2015-05-10 08:00,2015-05-16 16:00,2015-05-10 08:00,2015-05-16 16:00,2015-05-10 08:00,2015-05-16 16:00,2015-11-15 08:00,2015-11-20 16:00,,PT_Normal,,,,,UxwPyDffpkifApYTLLBfJg,GhGf+MtXSdW5j9tWXtEfyQ,,,N,0,0,,,2014-04-05 12:28,2014-04-05 13:21,admin,admin,
2473,142216,1749,36242,642,0,N,N,N,CP_Drtn,TT_Task,DT_FixedDUR2,TK_NotStart,P6-MEP-EL-B2-2060,BMS System Wiring,,1616,128,64,0,186,186,64,15191.435697,0,15191.435697,,,,2015-11-07 08:00,2015-11-14 16:00,,2015-04-12 08:00,2015-04-20 16:00,2015-04-12 08:00,2015-04-20 16:00,2015-04-12 08:00,2015-04-20 16:00,2015-11-07 08:00,2015-11-14 16:00,,PT_Normal,,,,,S96byU/BqUm+uOlQJs6MGQ,E43I6coFSLWP+Le6oG0oDw,,,N,0,0,,,2014-04-05 12:28,2014-04-05 13:21,admin,admin,
2474,142217,1749,36242,642,0,N,N,N,CP_Drtn,TT_Task,DT_FixedDUR2,TK_NotStart,P6-MEP-EL-B2-2040,Lighting  Wiring,,1144,0,96,0,241.713,241.713,96,3578.08423,0,3578.08423,,,,2015-09-09 08:00,2015-09-20 16:00,,2015-04-12 08:00,2015-04-25 16:00,2015-04-12 08:00,2015-04-25 16:00,2015-04-12 08:00,2015-04-25 16:00,2015-09-09 08:00,2015-09-20 16:00,,PT_Normal,,,,,MFi/iGeVZEKhey4HuLM/kg,TskLlADtQxepDkcUSvp4VQ,,,N,0,0,,,2014-04-05 12:28,2014-04-05 13:21,admin,admin,
2475,142218,1749,36242,642,0,N,N,N,CP_Drtn,TT_Task,DT_FixedDUR2,TK_NotStart,P6-MEP-EL-B2-2050,Power Points Wiring,,1144,0,96,0,192,192,96,2906.213289,0,2906.213289,,,,2015-09-21 08:00,2015-10-02 16:00,,2015-04-26 08:00,2015-05-09 16:00,2015-04-26 08:00,2015-05-09 16:00,2015-04-26 08:00,2015-05-09 16:00,2015-09-21 08:00,2015-10-02 16:00,,PT_Normal,,,,,dsTDUCeTAU+Xhew7Z0ye9g,24vOVddIT0OqvQs8Y7SvuQ,,,N,0,0,,,2014-04-05 12:28,2014-04-05 13:21,admin,admin,
2476,142219,1749,36242,642,0,N,N,N,CP_Drtn,TT_Task,DT_FixedDUR2,TK_NotStart,P6-MEP-EL-B2-2020,Cable Tray and Trunking Installation,,1144,0,168,0,504,504,168,9085.448617,0,9085.448617,,,,2015-10-03 08:00,2015-10-23 16:00,,2015-05-10 08:00,2015-06-02 16:00,2015-05-10 08:00,2015-06-02 16:00,2015-05-10 08:00,2015-06-02 16:00,2015-10-03 08:00,2015-10-23 16:00,,PT_Normal,,,,,TQDEvvPclEW5EQqlSG1gwA,RIflReHLT3qDiraLVHAMNQ,,,N,0,0,,,2014-04-05 12:28,2014-04-05 13:21,admin,admin,
2477,142220,1749,36242,642,0,N,N,N,CP_Drtn,TT_Task,DT_FixedDUR2,TK_NotStart,P6-MEP-EL-B2-2070,Emergency Light Wiring,,1144,0,64,0,128,128,64,1210.028798,0,1210.028798,,,,2015-10-24 08:00,2015-10-31 16:00,,2015-06-03 08:00,2015-06-10 16:00,2015-06-03 08:00,2015-06-10 16:00,2015-06-03 08:00,2015-06-10 16:00,2015-10-24 08:00,2015-10-31 16:00,,PT_Normal,,,,,UNjm4LDJOUuQGerxAB7GYw,3C4Gj3NDQaKDHO/jTn+mvw,,,N,0,0,,,2014-04-05 12:28,2014-04-05 13:21,admin,admin,
2478,142221,1749,36242,642,0,N,N,N,CP_Drtn,TT_Task,DT_FixedDUR2,TK_NotStart,P6-MEP-EL-B2-2030,Fire Alarm System Wiring,,1536,328,96,0,192,192,96,7123.009694,0,7123.009694,,,,2015-10-28 08:00,2015-11-08 16:00,,2015-04-12 08:00,2015-04-25 16:00,2015-04-12 08:00,2015-04-25 16:00,2015-04-12 08:00,2015-04-25 16:00,2015-10-28 08:00,2015-11-08 16:00,,PT_Normal,,,,,3iKsNVHBBUerR+IM0fnDig,GEmL6ZTKTLKwG8Hilf7Vjw,,,N,0,0,,,2014-04-05 12:28,2014-04-05 13:21,admin,admin,
2479,142222,1749,36242,642,0,N,N,N,CP_Drtn,TT_Task,DT_FixedDUR2,TK_NotStart,P6-MEP-EL-B2-2000,DB's Installation and Termination,4455,1824,216,96,0,288,288,96,4982.925025,0,4982.925025,,,,2015-12-09 08:00,2015-12-20 16:00,,2015-04-19 08:00,2015-05-02 16:00,2015-04-19 08:00,2015-05-02 16:00,2015-04-19 08:00,2015-05-02 16:00,2015-12-09 08:00,2015-12-20 16:00,,PT_Normal,,,,,lUB6EEs+fkeX0sKt9ztmAw,VMs9K0tLReW+TptaBwbJdg,,,N,0,0,,,2014-04-05 12:28,2014-04-05 13:21,admin,admin,
2480,142223,1749,36290,642,0,N,N,N,CP_Drtn,TT_Task,DT_FixedDUR2,TK_NotStart,P6-MEP-EL-B2-3020,Lights Fitting Fixing,,1656,512,112,0,244,244,112,7336.659378,0,7336.659378,,,,2016-01-16 08:00,2016-01-29 16:00,,2015-06-23 08:00,2015-07-06 16:00,2015-06-23 08:00,2015-07-06 16:00,2015-06-23 08:00,2015-07-06 16:00,2016-01-16 08:00,2016-01-29 16:00,,PT_Normal,,,,,1J5FK5sxoEq35igV1YKkRw,KH6vWmnyST+cUud23Fj1nw,,,N,0,0,,,2014-04-05 12:28,2014-04-05 13:21,admin,admin,
2481,142224,1749,36290,642,0,N,N,N,CP_Drtn,TT_Task,DT_FixedDUR2,TK_NotStart,P6-MEP-EL-B2-3050,Sockets and Switches Fixing,,1744,0,64,0,128,128,64,1174.957134,0,1174.957134,,,,2016-01-27 08:00,2016-02-03 16:00,,2015-06-23 08:00,2015-06-30 16:00,2015-06-23 08:00,2015-06-30 16:00,2015-06-23 08:00,2015-06-30 16:00,2016-01-27 08:00,2016-02-03 16:00,,PT_Normal,,,,,30rdU6M4QUqLWepUZ1JCvw,24oMhGYBQVCTpviAVYT8UQ,,,N,0,0,,,2014-04-05 12:28,2014-04-05 13:21,admin,admin,
2482,142225,1749,36290,642,0,N,N,N,CP_Drtn,TT_Task,DT_FixedDUR2,TK_NotStart,P6-MEP-EL-B2-3060,Emergency Light Fixing,,1744,0,64,0,128,128,64,5722.024623,0,5722.024623,,,,2016-01-27 08:00,2016-02-03 16:00,,2015-06-23 08:00,2015-06-30 16:00,2015-06-23 08:00,2015-06-30 16:00,2015-06-23 08:00,2015-06-30 16:00,2016-01-27 08:00,2016-02-03 16:00,,PT_Normal,,,,,6toeeiJYIkeXSj4CoxU4+Q,rn1Iq2+bQLegRxq5zXel0Q,,,N,0,0,,,2014-04-05 12:28,2014-04-05 13:21,admin,admin,
2483,142226,1749,36290,642,0,N,N,N,CP_Drtn,TT_Task,DT_FixedDUR2,TK_NotStart,P6-MEP-EL-B2-3000,CO2 System Installation,,1800,480,48,0,179.65,179.65,48,21033.761938,0,21033.761938,,,,2016-02-05 08:00,2016-02-10 16:00,,2015-06-25 08:00,2015-06-30 16:00,2015-06-25 08:00,2015-06-30 16:00,2015-06-25 08:00,2015-06-30 16:00,2016-02-05 08:00,2016-02-10 16:00,,PT_Normal,,,,,sq2WJ4Q5C0qVHiBhbUrPVQ,n0UknnQoTBqHlsGdmc1wjw,,,N,0,0,,,2014-04-05 12:28,2014-04-05 13:21,admin,admin,
2484,142227,1749,36290,642,0,N,N,N,CP_Drtn,TT_Task,DT_FixedDUR2,TK_NotStart,P6-MEP-EL-B2-3010,Fire Alarm System Detector Installation,,1712,0,96,0,192,192,96,4046.378277,0,4046.378277,,,,2016-01-11 08:00,2016-01-22 16:00,,2015-06-11 08:00,2015-06-22 16:00,2015-06-11 08:00,2015-06-22 16:00,2015-06-11 08:00,2015-06-22 16:00,2016-01-11 08:00,2016-01-22 16:00,,PT_Normal,,,,,VeDymkeRrkGTqcGSpfoA8g,4aVIC2kPRo6soBkriGD1Hg,,,N,0,0,,,2014-04-05 12:28,2014-04-05 13:21,admin,admin,
2485,142228,1749,36290,642,0,N,N,N,CP_Drtn,TT_Task,DT_FixedDUR2,TK_NotStart,P6-MEP-EL-B2-3030,SMDB's  Termination and Final Connection,,1656,0,48,0,192,192,48,2791.825001,0,2791.825001,,,,2016-01-10 08:00,2016-01-15 16:00,,2015-06-17 08:00,2015-06-22 16:00,2015-06-17 08:00,2015-06-22 16:00,2015-06-17 08:00,2015-06-22 16:00,2016-01-10 08:00,2016-01-15 16:00,,PT_Normal,,,,,v7SDEvcMhkyFbVpsyBmS0w,TAOlGejuTB2O9CFPBeulfA,,,N,0,0,,,2014-04-05 12:28,2014-04-05 13:21,admin,admin,
2486,142229,1749,36242,642,0,N,N,N,CP_Drtn,TT_Task,DT_FixedDUR2,TK_NotStart,P6-MEP-EL-B2-3040,Power Cable Puling,,1608,0,112,0,168,168,112,13646.333768,0,13646.333768,,,,2015-12-21 08:00,2016-01-03 16:00,,2015-06-03 08:00,2015-06-16 16:00,2015-06-03 08:00,2015-06-16 16:00,2015-06-03 08:00,2015-06-16 16:00,2015-12-21 08:00,2016-01-03 16:00,,PT_Normal,,,,,YtCKCzhu80uPsb9QEyKE5Q,OqfEqeUvT0iHaY6LvnR5IQ,,,N,0,0,,,2014-04-05 12:28,2014-04-05 13:21,admin,admin,
2487,142230,1749,36618,642,0,N,N,N,CP_Drtn,TT_Task,DT_FixedDUR2,TK_NotStart,P6-MEP-PL-B1-2000,Parking Drain Installation,,1952,216,48,0,48,48,48,553.83323,0,553.83323,,,,2016-01-18 08:00,2016-01-23 16:00,,2015-05-17 08:00,2015-05-23 16:00,2015-05-17 08:00,2015-05-23 16:00,2015-05-17 08:00,2015-05-23 16:00,2016-01-18 08:00,2016-01-23 16:00,,PT_Normal,,,,,bnaPk8IpuUCOMOpP7Discw,08kvR7WPRD2of9JkfRq1pQ,,,N,0,0,,,2014-04-05 12:28,2014-04-05 13:21,admin,admin,
2488,142231,1749,36618,642,0,N,N,N,CP_Drtn,TT_Task,DT_FixedDUR2,TK_NotStart,P6-MEP-PL-B1-2030,High Level Water Supply Pipes and Fittings Installation,,1680,0,168,0,150.02,150.02,168,1329.597866,0,1329.597866,,,,2015-12-27 08:00,2016-01-16 16:00,,2015-05-31 08:00,2015-06-20 16:00,2015-05-31 08:00,2015-06-20 16:00,2015-05-31 08:00,2015-06-20 16:00,2015-12-27 08:00,2016-01-16 16:00,,PT_Normal,,,,,DssTLjQ2WUO4qHItgwHFRA,Aphce4TARoWEa4gWwqJHGg,,,N,0,0,,,2014-04-05 12:28,2014-04-05 13:21,admin,admin,
2489,142232,1749,36618,642,0,N,N,N,CP_Drtn,TT_Task,DT_FixedDUR2,TK_NotStart,P6-MEP-PL-B1-2010,High Level Drainage Pipes Installation,,1736,0,168,0,244.38,244.38,168,6583.525267,0,6583.525267,,,,2016-01-03 08:00,2016-01-23 16:00,,2015-05-31 08:00,2015-06-20 16:00,2015-05-31 08:00,2015-06-20 16:00,2015-05-31 08:00,2015-06-20 16:00,2016-01-03 08:00,2016-01-23 16:00,,PT_Normal,,,,,/chbUPiBgEmbT/b8boj0sQ,xiPlca1dRTajYg1kOlTeMA,,,N,0,0,,,2014-04-05 12:28,2014-04-05 13:21,admin,admin,
2490,142233,1749,36618,642,0,N,N,N,CP_Drtn,TT_Task,DT_FixedDUR2,TK_NotStart,P6-MEP-PL-B1-2040,Water Supply Pipes Pressure Test,4456,1680,1200,48,0,48,48,48,151.744312,0,151.744312,,,,2016-01-17 08:00,2016-01-22 16:00,,2015-06-21 08:00,2015-06-26 16:00,2015-06-21 08:00,2015-06-26 16:00,2015-06-21 08:00,2015-06-26 16:00,2016-01-17 08:00,2016-01-22 16:00,,PT_Normal,,,,,vDLnoHivfUysBP2PDmsG4Q,2c+quwKvRHWkvvk6C2E1+Q,,,N,0,0,,,2014-04-05 12:28,2014-04-05 13:21,admin,admin,
2491,142234,1749,36618,642,0,N,N,N,CP_Drtn,TT_Task,DT_FixedDUR2,TK_NotStart,P6-MEP-PL-B1-2020,Drainage Pipes Gravity Test,,1736,0,48,0,48,48,48,826.240719,0,826.240719,,,,2016-01-24 08:00,2016-01-29 16:00,,2015-06-21 08:00,2015-06-26 16:00,2015-06-21 08:00,2015-06-26 16:00,2015-06-21 08:00,2015-06-26 16:00,2016-01-24 08:00,2016-01-29 16:00,,PT_Normal,,,,,qkh3kzFrLEKPzJrEl0surw,qWGZQE5DRo6+IUsBMDPjdA,,,N,0,0,,,2014-04-05 12:28,2014-04-05 13:21,admin,admin,
2492,142235,1749,36191,642,0,N,N,N,CP_Drtn,TT_Task,DT_FixedDUR2,TK_NotStart,P6-MEP-EL-B1-1010,PVC Back Boxes and Conduits  Fixing in Wall,,1232,0,96,0,384,384,96,3319.67233,0,3319.67233,,,,2015-10-20 08:00,2015-10-31 16:00,,2015-05-17 08:00,2015-05-30 16:00,2015-05-17 08:00,2015-05-30 16:00,2015-05-17 08:00,2015-05-30 16:00,2015-10-20 08:00,2015-10-31 16:00,,PT_Normal,,,,,ui5G4nMgGU+maVZuaHQvFQ,75V6m3GEQc23OqgFLbGOpA,,,N,0,0,,,2014-04-05 12:28,2014-04-05 13:21,admin,admin,
2493,142236,1749,36191,642,0,N,N,N,CP_Drtn,TT_Task,DT_FixedDUR2,TK_NotStart,P6-MEP-EL-B1-1000,DB's Inclosure Fixing,4455,1600,200,48,0,96,96,48,2136.399392,0,2136.399392,,,,2015-12-17 08:00,2015-12-22 16:00,,2015-05-31 08:00,2015-06-05 16:00,2015-05-31 08:00,2015-06-05 16:00,2015-05-31 08:00,2015-06-05 16:00,2015-12-17 08:00,2015-12-22 16:00,,PT_Normal,,,,,F+rpjdsC8kud8mwG4dT0ew,VLpHjurLQ6ehwQgTH/4/Ew,,,N,0,0,,,2014-04-05 12:28,2014-04-05 13:21,admin,admin,
2494,142237,1749,36317,642,0,N,N,N,CP_Drtn,TT_Task,DT_FixedDUR2,TK_NotStart,P6-MEP-EL-B1-2010,"SMDB's , MDB's  Installation",,1144,0,96,0,336,336,96,4208.598932,0,4208.598932,,,,2015-11-21 08:00,2015-12-02 16:00,,2015-07-01 08:00,2015-07-12 16:00,2015-07-01 08:00,2015-07-12 16:00,2015-07-01 08:00,2015-07-12 16:00,2015-11-21 08:00,2015-12-02 16:00,,PT_Normal,,,,,gdxMyJ5Pl0GJYTRGZ//b5w,bVAEuPBlT8+wQLGCnbtiDQ,,,N,0,0,,,2014-04-05 12:28,2014-04-05 13:21,admin,admin,
2495,142238,1749,36317,642,0,N,N,N,CP_Drtn,TT_Task,DT_FixedDUR2,TK_NotStart,P6-MEP-EL-B1-2060,BMS System Wiring,,1144,0,64,0,186,186,64,15191.435697,0,15191.435697,,,,2015-12-03 08:00,2015-12-10 16:00,,2015-07-13 08:00,2015-07-20 16:00,2015-07-13 08:00,2015-07-20 16:00,2015-07-13 08:00,2015-07-20 16:00,2015-12-03 08:00,2015-12-10 16:00,,PT_Normal,,,,,3EJCnx3GYU2Hw8/VY8ifOw,Z+rsEkP9Qd6RD2fNL3qh0g,,,N,0,0,,,2014-04-05 12:28,2014-04-05 13:21,admin,admin,
2496,142239,1749,36317,642,0,N,N,N,CP_Drtn,TT_Task,DT_FixedDUR2,TK_NotStart,P6-MEP-EL-B1-2020,Lighting  Wiring,,1144,0,96,0,241.713,241.713,96,3578.08423,0,3578.08423,,,,2015-12-11 08:00,2015-12-22 16:00,,2015-07-21 08:00,2015-08-01 16:00,2015-07-21 08:00,2015-08-01 16:00,2015-07-21 08:00,2015-08-01 16:00,2015-12-11 08:00,2015-12-22 16:00,,PT_Normal,,,,,eg7Z7eRQUUC98lkcqPMznA,6DF6Ps0gRlqWHjQ6d7/EMQ,,,N,0,0,,,2014-04-05 12:28,2014-04-05 13:21,admin,admin,
2497,142240,1749,36317,642,0,N,N,N,CP_Drtn,TT_Task,DT_FixedDUR2,TK_NotStart,P6-MEP-EL-B1-2030,Power Points Wiring,,1144,0,96,0,192,192,96,2906.213289,0,2906.213289,,,,2015-12-23 08:00,2016-01-03 16:00,,2015-08-02 08:00,2015-08-13 16:00,2015-08-02 08:00,2015-08-13 16:00,2015-08-02 08:00,2015-08-13 16:00,2015-12-23 08:00,2016-01-03 16:00,,PT_Normal,,,,,HIJZmpWxCUiDTOIYwu8UnQ,okvENyXVSmioyPqrBWpO0A,,,N,0,0,,,2014-04-05 12:28,2014-04-05 13:21,admin,admin,
2498,142241,1749,36317,642,0,N,N,N,CP_Drtn,TT_Task,DT_FixedDUR2,TK_NotStart,P6-MEP-EL-B1-2040,Cable Tray and Trunking Installation,,1328,184,168,0,504,504,168,9085.448617,0,9085.448617,,,,2015-12-14 08:00,2016-01-03 16:00,,2015-07-01 08:00,2015-07-21 16:00,2015-07-01 08:00,2015-07-21 16:00,2015-07-01 08:00,2015-07-21 16:00,2015-12-14 08:00,2016-01-03 16:00,,PT_Normal,,,,,uB/0YlrfGU67q8VaX0RCVQ,JKpZbUAbTAuIJ5esv1h+lg,,,N,0,0,,,2014-04-05 12:28,2014-04-05 13:21,admin,admin,
2499,142242,1749,36317,642,0,N,N,N,CP_Drtn,TT_Task,DT_FixedDUR2,TK_NotStart,P6-MEP-EL-B1-2070,Emergency Light Wiring,,1144,0,64,0,128,128,64,1210.028798,0,1210.028798,,,,2015-11-01 08:00,2015-11-08 16:00,,2015-06-11 08:00,2015-06-18 16:00,2015-06-11 08:00,2015-06-18 16:00,2015-06-11 08:00,2015-06-18 16:00,2015-11-01 08:00,2015-11-08 16:00,,PT_Normal,,,,,7OoDv7ZfxECM3H9NY+ypyg,SkLEEUCNSzyZviz2Qj0gng,,,N,0,0,,,2014-04-05 12:28,2014-04-05 13:21,admin,admin,
2500,142243,1749,36317,642,0,N,N,N,CP_Drtn,TT_Task,DT_FixedDUR2,TK_NotStart,P6-MEP-EL-B1-2050,Fire Alarm System Wiring,,1144,0,96,0,192,192,96,7123.009694,0,7123.009694,,,,2015-11-09 08:00,2015-11-20 16:00,,2015-06-19 08:00,2015-06-30 16:00,2015-06-19 08:00,2015-06-30 16:00,2015-06-19 08:00,2015-06-30 16:00,2015-11-09 08:00,2015-11-20 16:00,,PT_Normal,,,,,s9H1Ux1io0SDPfgSYnrOow,sgys7LLuTRyBQ7VGQgwQCw,,,N,0,0,,,2014-04-05 12:28,2014-04-05 13:21,admin,admin,
2501,142244,1749,36317,642,0,N,N,N,CP_Drtn,TT_Task,DT_FixedDUR2,TK_NotStart,P6-MEP-EL-B1-2000,DB's Installation and Termination,4455,1400,256,96,0,288,288,96,4982.925025,0,4982.925025,,,,2015-12-23 08:00,2016-01-03 16:00,,2015-07-01 08:00,2015-07-12 16:00,2015-07-01 08:00,2015-07-12 16:00,2015-07-01 08:00,2015-07-12 16:00,2015-12-23 08:00,2016-01-03 16:00,,PT_Normal,,,,,2q3TkrsuR02rA8k5iVSBHQ,/Tf1RNfWT5KrCF7/b72ANw,,,N,0,0,,,2014-04-05 12:28,2014-04-05 13:21,admin,admin,
2502,142245,1749,36090,642,0,N,N,N,CP_Drtn,TT_Task,DT_FixedDUR2,TK_NotStart,P6-MEP-EL-B1-3020,Lights Fitting Fixing,,1144,840,112,0,244,244,112,7336.659378,0,7336.659378,,,,2016-01-30 08:00,2016-02-12 16:00,,2015-09-09 08:00,2015-09-22 16:00,2015-09-09 08:00,2015-09-22 16:00,2015-09-09 08:00,2015-09-22 16:00,2016-01-30 08:00,2016-02-12 16:00,,PT_Normal,,,,,FVmqsMaGMEaJE6n6OF533w,JKWe1ijlT6CyUywguqS2vg,,,N,0,0,,,2014-04-05 12:28,2014-04-05 13:21,admin,admin,
2503,142246,1749,36090,642,0,N,N,N,CP_Drtn,TT_Task,DT_FixedDUR2,TK_NotStart,P6-MEP-EL-B1-3050,Sockets and Switches Fixing,,1280,0,64,0,128,128,64,1174.957134,0,1174.957134,,,,2016-02-04 08:00,2016-02-11 16:00,,2015-08-28 08:00,2015-09-04 16:00,2015-08-28 08:00,2015-09-04 16:00,2015-08-28 08:00,2015-09-04 16:00,2016-02-04 08:00,2016-02-11 16:00,,PT_Normal,,,,,e93HtpDd3kyKDQWMIGdXSw,Np5N+Xb6RQSMbgzCYObwWQ,,,N,0,0,,,2014-04-05 12:28,2014-04-05 13:21,admin,admin,
2504,142247,1749,36090,642,0,N,N,N,CP_Drtn,TT_Task,DT_FixedDUR2,TK_NotStart,P6-MEP-EL-B1-3060,Emergency Light Fixing,,1280,0,64,0,128,128,64,5722.024623,0,5722.024623,,,,2016-02-04 08:00,2016-02-11 16:00,,2015-08-28 08:00,2015-09-04 16:00,2015-08-28 08:00,2015-09-04 16:00,2015-08-28 08:00,2015-09-04 16:00,2016-02-04 08:00,2016-02-11 16:00,,PT_Normal,,,,,82ch9/S02EiMwcc+rQhqSA,RaYZ0x5BRbGXuMrul3D7kw,,,N,0,0,,,2014-04-05 12:28,2014-04-05 13:21,admin,admin,
2505,142248,1749,36090,642,0,N,N,N,CP_Drtn,TT_Task,DT_FixedDUR2,TK_NotStart,P6-MEP-EL-B1-3000,CO2 System Installation,,1320,640,48,0,179.65,179.65,48,21033.761938,0,21033.761938,,,,2016-02-11 08:00,2016-02-16 16:00,,2015-08-30 08:00,2015-09-04 16:00,2015-08-30 08:00,2015-09-04 16:00,2015-08-30 08:00,2015-09-04 16:00,2016-02-11 08:00,2016-02-16 16:00,,PT_Normal,,,,,fRQxw1JNNU20qsol+bTL7g,IVmWXjasQKGMcEL1jBDiOQ,,,N,0,0,,,2014-04-05 12:28,2014-04-05 13:21,admin,admin,
2506,142249,1749,36090,642,0,N,N,N,CP_Drtn,TT_Task,DT_FixedDUR2,TK_NotStart,P6-MEP-EL-B1-3030,Fire Alarm System Detector Installation,,1296,16,96,0,192,192,96,4046.378277,0,4046.378277,,,,2016-01-23 08:00,2016-02-03 16:00,,2015-08-14 08:00,2015-08-25 16:00,2015-08-14 08:00,2015-08-25 16:00,2015-08-14 08:00,2015-08-25 16:00,2016-01-23 08:00,2016-02-03 16:00,,PT_Normal,,,,,YDg6fStr4EmjvjBnF4J0Vg,VPUjS6S6Qvaj6BjLbtYhMQ,,,N,0,0,,,2014-04-05 12:28,2014-04-05 13:21,admin,admin,
2507,142250,1749,36090,642,0,N,N,N,CP_Drtn,TT_Task,DT_FixedDUR2,TK_NotStart,P6-MEP-EL-B1-3010,"SMDB's  , MDB's Termination and Final Connection",,1144,0,96,0,384,384,96,20737.637079,0,20737.637079,,,,2016-01-18 08:00,2016-01-29 16:00,,2015-08-28 08:00,2015-09-08 16:00,2015-08-28 08:00,2015-09-08 16:00,2015-08-28 08:00,2015-09-08 16:00,2016-01-18 08:00,2016-01-29 16:00,,PT_Normal,,,,,3LAy1DC2skufaqkUVE/vBw,nI3c6ZpaTTydNoF079L0tQ,,,N,0,0,,,2014-04-05 12:28,2014-04-05 13:21,admin,admin,
2508,142251,1749,36317,642,0,N,N,N,CP_Drtn,TT_Task,DT_FixedDUR2,TK_NotStart,P6-MEP-EL-B1-3040,Power Cable Puling,,1144,0,112,0,168,168,112,13646.333768,0,13646.333768,,,,2016-01-04 08:00,2016-01-17 16:00,,2015-08-14 08:00,2015-08-27 16:00,2015-08-14 08:00,2015-08-27 16:00,2015-08-14 08:00,2015-08-27 16:00,2016-01-04 08:00,2016-01-17 16:00,,PT_Normal,,,,,fnvEtPEnL0GckGnYVq7k9w,1opE8XY+TASW4nkWvIensg,,,N,0,0,,,2014-04-05 12:28,2014-04-05 13:21,admin,admin,
2509,142252,1749,36552,642,0,N,N,N,CP_Drtn,TT_Task,DT_FixedDUR2,TK_NotStart,P7-MEP-PL-B2-2000,Parking Drain Installation,,1536,216,48,0,48,48,48,553.83323,0,553.83323,,,,2016-01-12 08:00,2016-01-17 16:00,,2015-07-04 08:00,2015-07-09 16:00,2015-07-04 08:00,2015-07-09 16:00,2015-07-04 08:00,2015-07-09 16:00,2016-01-12 08:00,2016-01-17 16:00,,PT_Normal,,,,,QmdCmZb7q0yCPnVvRvL9cw,pPiNBEdcR9uFagJbfyzuXQ,,,N,0,0,,,2014-04-05 12:28,2014-04-05 13:21,admin,admin,
2510,142253,1749,36552,642,0,N,N,N,CP_Drtn,TT_Task,DT_FixedDUR2,TK_NotStart,P7-MEP-PL-B2-2030,High Level Water Supply Pipes and Fittings Installation,,1144,0,168,0,150.02,150.02,168,1329.597866,0,1329.597866,,,,2015-12-06 08:00,2015-12-26 16:00,,2015-07-16 08:00,2015-08-05 16:00,2015-07-16 08:00,2015-08-05 16:00,2015-07-16 08:00,2015-08-05 16:00,2015-12-06 08:00,2015-12-26 16:00,,PT_Normal,,,,,8ECuGEeZJUuYcvi7LGeTRQ,YNomm+q9SjGOF6s941dX0g,,,N,0,0,,,2014-04-05 12:28,2014-04-05 13:21,admin,admin,
2511,142254,1749,36552,642,0,N,N,N,CP_Drtn,TT_Task,DT_FixedDUR2,TK_NotStart,P7-MEP-PL-B2-2010,High Level Drainage Pipes Installation,,1200,0,168,0,244.38,244.38,168,6583.525267,0,6583.525267,,,,2015-12-13 08:00,2016-01-02 16:00,,2015-07-16 08:00,2015-08-05 16:00,2015-07-16 08:00,2015-08-05 16:00,2015-07-16 08:00,2015-08-05 16:00,2015-12-13 08:00,2016-01-02 16:00,,PT_Normal,,,,,AxGGZRgKbEGY0+VuUTmejA,/yiVWuu3Smigveq82fT54A,,,N,0,0,,,2014-04-05 12:28,2014-04-05 13:21,admin,admin,
2512,142255,1749,36552,642,0,N,N,N,CP_Drtn,TT_Task,DT_FixedDUR2,TK_NotStart,P7-MEP-PL-B2-2040,Water Supply Pipes Pressure Test,4456,1264,288,48,0,48,48,48,151.744312,0,151.744312,,,,2016-01-11 08:00,2016-01-16 16:00,,2015-08-06 08:00,2015-08-11 16:00,2015-08-06 08:00,2015-08-11 16:00,2015-08-06 08:00,2015-08-11 16:00,2016-01-11 08:00,2016-01-16 16:00,,PT_Normal,,,,,2Z1dC8pMuUO/d32tdMfwoQ,8BxjtlZMS6qsidz3qPonrw,,,N,0,0,,,2014-04-05 12:28,2014-04-05 13:21,admin,admin,
2513,142256,1749,36552,642,0,N,N,N,CP_Drtn,TT_Task,DT_FixedDUR2,TK_NotStart,P7-MEP-PL-B2-2020,Drainage Pipes Gravity Test,,1320,0,48,0,48,48,48,826.240719,0,826.240719,,,,2016-01-18 08:00,2016-01-23 16:00,,2015-08-06 08:00,2015-08-11 16:00,2015-08-06 08:00,2015-08-11 16:00,2015-08-06 08:00,2015-08-11 16:00,2016-01-18 08:00,2016-01-23 16:00,,PT_Normal,,,,,Qm5ipD+KoU6QPv9ZNNTGEA,jXY9bsqGTSy72ViVp0dz+g,,,N,0,0,,,2014-04-05 12:28,2014-04-05 13:21,admin,admin,
2514,142257,1749,36249,642,0,N,N,N,CP_Drtn,TT_Task,DT_FixedDUR2,TK_NotStart,P7-MEP-EL-B2-1010,PVC Back Boxes and Conduits  Fixing in Wall,,944,0,96,0,384,384,96,3319.67233,0,3319.67233,,,,2015-10-30 08:00,2015-11-10 16:00,,2015-07-04 08:00,2015-07-15 16:00,2015-07-04 08:00,2015-07-15 16:00,2015-07-04 08:00,2015-07-15 16:00,2015-10-30 08:00,2015-11-10 16:00,,PT_Normal,,,,,hiWTHdG+WUWyTCXpEl1Jkg,fo9bDt6cTva8xsnGFQFVwQ,,,N,0,0,,,2014-04-05 12:28,2014-04-05 13:21,admin,admin,
2515,142258,1749,36249,642,0,N,N,N,CP_Drtn,TT_Task,DT_FixedDUR2,TK_NotStart,P7-MEP-EL-B2-1000,DB's Inclosure Fixing,4455,992,48,48,0,96,96,48,2136.399392,0,2136.399392,,,,2015-11-17 08:00,2015-11-22 16:00,,2015-07-16 08:00,2015-07-21 16:00,2015-07-16 08:00,2015-07-21 16:00,2015-07-16 08:00,2015-07-21 16:00,2015-11-17 08:00,2015-11-22 16:00,,PT_Normal,,,,,+R9bvhwDT0mCZTiT1aZZYg,nmVanpKGSUCtPyB8QBSlPQ,,,N,0,0,,,2014-04-05 12:28,2014-04-05 13:21,admin,admin,
2516,142259,1749,36248,642,0,N,N,N,CP_Drtn,TT_Task,DT_FixedDUR2,TK_NotStart,P7-MEP-EL-B2-2010,SMDB's Installation,,1128,72,48,0,48,48,48,4976.925025,0,4976.925025,,,,2015-12-31 08:00,2016-01-05 16:00,,2015-08-12 08:00,2015-08-17 16:00,2015-08-12 08:00,2015-08-17 16:00,2015-08-12 08:00,2015-08-17 16:00,2015-12-31 08:00,2016-01-05 16:00,,PT_Normal,,,,,gnJWeWT+xkeRo+20JdNjIw,ytQEMwRIRd2thFLvhHq7Jg,,,N,0,0,,,2014-04-05 12:28,2014-04-05 13:21,admin,admin,
2517,142260,1749,36248,642,0,N,N,N,CP_Drtn,TT_Task,DT_FixedDUR2,TK_NotStart,P7-MEP-EL-B2-2060,BMS System Wiring,,1408,272,64,0,186,186,64,15191.435697,0,15191.435697,,,,2016-01-08 08:00,2016-01-15 16:00,,2015-07-16 08:00,2015-07-23 16:00,2015-07-16 08:00,2015-07-23 16:00,2015-07-16 08:00,2015-07-23 16:00,2016-01-08 08:00,2016-01-15 16:00,,PT_Normal,,,,,IpgapalrPEibqiooQ2B8LQ,ti2ryIcKSqaEFvuVqdekyQ,,,N,0,0,,,2014-04-05 12:28,2014-04-05 13:21,admin,admin,
2518,142261,1749,36248,642,0,N,N,N,CP_Drtn,TT_Task,DT_FixedDUR2,TK_NotStart,P7-MEP-EL-B2-2020,Lighting  Wiring,,944,0,96,0,241.713,241.713,96,3578.08423,0,3578.08423,,,,2015-11-11 08:00,2015-11-22 16:00,,2015-07-16 08:00,2015-07-27 16:00,2015-07-16 08:00,2015-07-27 16:00,2015-07-16 08:00,2015-07-27 16:00,2015-11-11 08:00,2015-11-22 16:00,,PT_Normal,,,,,EOd6wPC2/kmdKfUogYYQ2w,8gVcnTlaTzK+QPOW92lJmw,,,N,0,0,,,2014-04-05 12:28,2014-04-05 13:21,admin,admin,
2519,142262,1749,36248,642,0,N,N,N,CP_Drtn,TT_Task,DT_FixedDUR2,TK_NotStart,P7-MEP-EL-B2-2030,Power Points Wiring,,1168,168,96,0,192,192,96,2906.213289,0,2906.213289,,,,2015-12-09 08:00,2015-12-20 16:00,,2015-07-16 08:00,2015-07-27 16:00,2015-07-16 08:00,2015-07-27 16:00,2015-07-16 08:00,2015-07-27 16:00,2015-12-09 08:00,2015-12-20 16:00,,PT_Normal,,,,,BU1abAnkEUWeIipmAqtpiw,gc56q7fIT32K5tyQ1Zp/gw,,,N,0,0,,,2014-04-05 12:28,2014-04-05 13:21,admin,admin,
2520,142263,1749,36248,642,0,N,N,N,CP_Drtn,TT_Task,DT_FixedDUR2,TK_NotStart,P7-MEP-EL-B2-2040,Cable Tray and Trunking Installation,,944,0,168,0,504,504,168,9085.448617,0,9085.448617,,,,2015-11-23 08:00,2015-12-13 16:00,,2015-07-28 08:00,2015-08-17 16:00,2015-07-28 08:00,2015-08-17 16:00,2015-07-28 08:00,2015-08-17 16:00,2015-11-23 08:00,2015-12-13 16:00,,PT_Normal,,,,,kunukC4qg0qz2t2Oi7b68w,NU8bFK9JTWaIBjGJL1U7FA,,,N,0,0,,,2014-04-05 12:28,2014-04-05 13:21,admin,admin,
2521,142264,1749,36248,642,0,N,N,N,CP_Drtn,TT_Task,DT_FixedDUR2,TK_NotStart,P7-MEP-EL-B2-2070,Emergency Light Wiring,,1496,272,64,0,128,128,64,1210.028798,0,1210.028798,,,,2016-01-19 08:00,2016-01-26 16:00,,2015-07-16 08:00,2015-07-23 16:00,2015-07-16 08:00,2015-07-23 16:00,2015-07-16 08:00,2015-07-23 16:00,2016-01-19 08:00,2016-01-26 16:00,,PT_Normal,,,,,niXBzzjjfkuzxKeakn646A,rMUjj/GORlGfFkcVEqwDcw,,,N,0,0,,,2014-04-05 12:28,2014-04-05 13:21,admin,admin,
2522,142265,1749,36248,642,0,N,N,N,CP_Drtn,TT_Task,DT_FixedDUR2,TK_NotStart,P7-MEP-EL-B2-2050,Fire Alarm System Wiring,,1336,0,96,0,192,192,96,7123.009694,0,7123.009694,,,,2015-12-30 08:00,2016-01-10 16:00,,2015-07-16 08:00,2015-07-27 16:00,2015-07-16 08:00,2015-07-27 16:00,2015-07-16 08:00,2015-07-27 16:00,2015-12-30 08:00,2016-01-10 16:00,,PT_Normal,,,,,sQxOTCUD90yl2wRQSNIqrQ,/1qSjQK2RjmD96guR6UKsQ,,,N,0,0,,,2014-04-05 12:28,2014-04-05 13:21,admin,admin,
2523,142266,1749,36248,642,0,N,N,N,CP_Drtn,TT_Task,DT_FixedDUR2,TK_NotStart,P7-MEP-EL-B2-2000,DB's Installation and Termination,4455,944,0,96,0,288,288,96,4982.925025,0,4982.925025,,,,2015-11-23 08:00,2015-12-04 16:00,,2015-07-28 08:00,2015-08-08 16:00,2015-07-28 08:00,2015-08-08 16:00,2015-07-28 08:00,2015-08-08 16:00,2015-11-23 08:00,2015-12-04 16:00,,PT_Normal,,,,,9g4hs70vf0SoTpyACHyG0w,QEYOY1diT2aJKaVuzIBxGw,,,N,0,0,,,2014-04-05 12:28,2014-04-05 13:21,admin,admin,
2524,142267,1749,36288,642,0,N,N,N,CP_Drtn,TT_Task,DT_FixedDUR2,TK_NotStart,P7-MEP-EL-B2-3020,Lights Fitting Fixing,,1048,0,112,0,244,244,112,7336.659378,0,7336.659378,,,,2016-01-16 08:00,2016-01-29 16:00,,2015-09-07 08:00,2015-09-20 16:00,2015-09-07 08:00,2015-09-20 16:00,2015-09-07 08:00,2015-09-20 16:00,2016-01-16 08:00,2016-01-29 16:00,,PT_Normal,,,,,DR1VCVqHgkeoJY3EwhrI5w,M9dviE4bTX+ggVAh424PeQ,,,N,0,0,,,2014-04-05 12:28,2014-04-05 13:21,admin,admin,
2525,142268,1749,36288,642,0,N,N,N,CP_Drtn,TT_Task,DT_FixedDUR2,TK_NotStart,P7-MEP-EL-B2-3050,Sockets and Switches Fixing,,1088,0,64,0,128,128,64,1174.957134,0,1174.957134,,,,2016-01-27 08:00,2016-02-03 16:00,,2015-09-13 08:00,2015-09-20 16:00,2015-09-13 08:00,2015-09-20 16:00,2015-09-13 08:00,2015-09-20 16:00,2016-01-27 08:00,2016-02-03 16:00,,PT_Normal,,,,,uBJow6b0wUuTKDtw89rpmg,i15nA2dPROai8b87oxG7jA,,,N,0,0,,,2014-04-05 12:28,2014-04-05 13:21,admin,admin,
2526,142269,1749,36288,642,0,N,N,N,CP_Drtn,TT_Task,DT_FixedDUR2,TK_NotStart,P7-MEP-EL-B2-3060,Emergency Light Fixing,,1088,0,64,0,128,128,64,5722.024623,0,5722.024623,,,,2016-01-27 08:00,2016-02-03 16:00,,2015-09-13 08:00,2015-09-20 16:00,2015-09-13 08:00,2015-09-20 16:00,2015-09-13 08:00,2015-09-20 16:00,2016-01-27 08:00,2016-02-03 16:00,,PT_Normal,,,,,rwK4nbEiME+7aHelOB/NLw,LWlnPZy1T8u4Y5a1kVQhZg,,,N,0,0,,,2014-04-05 12:28,2014-04-05 13:21,admin,admin,
2527,142270,1749,36288,642,0,N,N,N,CP_Drtn,TT_Task,DT_FixedDUR2,TK_NotStart,P7-MEP-EL-B2-3000,CO2 System Installation,,1144,8,48,0,179.65,179.65,48,21033.761938,0,21033.761938,,,,2016-02-05 08:00,2016-02-10 16:00,,2015-09-15 08:00,2015-09-20 16:00,2015-09-15 08:00,2015-09-20 16:00,2015-09-15 08:00,2015-09-20 16:00,2016-02-05 08:00,2016-02-10 16:00,,PT_Normal,,,,,5GVK1ab9fUmoG9DOIIeaLA,uQEfHjtIQNuEFptu2rjcxg,,,N,0,0,,,2014-04-05 12:28,2014-04-05 13:21,admin,admin,
2528,142271,1749,36288,642,0,N,N,N,CP_Drtn,TT_Task,DT_FixedDUR2,TK_NotStart,P7-MEP-EL-B2-3030,Fire Alarm System Detector Installation,,1336,240,96,0,192,192,96,4046.378277,0,4046.378277,,,,2016-01-11 08:00,2016-01-22 16:00,,2015-07-28 08:00,2015-08-08 16:00,2015-07-28 08:00,2015-08-08 16:00,2015-07-28 08:00,2015-08-08 16:00,2016-01-11 08:00,2016-01-22 16:00,,PT_Normal,,,,,tviJUa+8d06bk7hL8n7DwA,48aWmJKOTUmKV/IwLEgtRw,,,N,0,0,,,2014-04-05 12:28,2014-04-05 13:21,admin,admin,
2529,142272,1749,36288,642,0,N,N,N,CP_Drtn,TT_Task,DT_FixedDUR2,TK_NotStart,P7-MEP-EL-B2-3010,SMDB's  Termination and Final Connection,,1048,0,48,0,192,192,48,2791.825001,0,2791.825001,,,,2016-01-10 08:00,2016-01-15 16:00,,2015-09-01 08:00,2015-09-06 16:00,2015-09-01 08:00,2015-09-06 16:00,2015-09-01 08:00,2015-09-06 16:00,2016-01-10 08:00,2016-01-15 16:00,,PT_Normal,,,,,W0rLc0fC2Eecy6kOVDp9lw,G746eS2sRFinYCBic4IDrQ,,,N,0,0,,,2014-04-05 12:28,2014-04-05 13:21,admin,admin,
2530,142273,1749,36248,642,0,N,N,N,CP_Drtn,TT_Task,DT_FixedDUR2,TK_NotStart,P7-MEP-EL-B2-3040,Power Cable Puling,,1000,0,112,0,168,168,112,13646.333768,0,13646.333768,,,,2015-12-21 08:00,2016-01-03 16:00,,2015-08-18 08:00,2015-08-31 16:00,2015-08-18 08:00,2015-08-31 16:00,2015-08-18 08:00,2015-08-31 16:00,2015-12-21 08:00,2016-01-03 16:00,,PT_Normal,,,,,NDBTaAp4Gkmi1J0mvb0ONg,fE0s5kAnQheYtGlnfFtSnw,,,N,0,0,,,2014-04-05 12:28,2014-04-05 13:21,admin,admin,
2531,142274,1749,36569,642,0,N,N,N,CP_Drtn,TT_Task,DT_FixedDUR2,TK_NotStart,P7-MEP-PL-B1-2000,Parking Drain Installation,,1248,216,48,0,48,48,48,553.83323,0,553.83323,,,,2016-01-18 08:00,2016-01-23 16:00,,2015-08-15 08:00,2015-08-20 16:00,2015-08-15 08:00,2015-08-20 16:00,2015-08-15 08:00,2015-08-20 16:00,2016-01-18 08:00,2016-01-23 16:00,,PT_Normal,,,,,AqapV5SeMUO4dERXH0uu2g,fI2vWWliSRuyFPrBqqL70Q,,,N,0,0,,,2014-04-05 12:28,2014-04-05 13:21,admin,admin,
2532,142275,1749,36569,642,0,N,N,N,CP_Drtn,TT_Task,DT_FixedDUR2,TK_NotStart,P7-MEP-PL-B1-2030,High Level Water Supply Pipes and Fittings Installation,,976,0,168,0,150.02,150.02,168,1329.597866,0,1329.597866,,,,2015-12-27 08:00,2016-01-16 16:00,,2015-08-27 08:00,2015-09-16 16:00,2015-08-27 08:00,2015-09-16 16:00,2015-08-27 08:00,2015-09-16 16:00,2015-12-27 08:00,2016-01-16 16:00,,PT_Normal,,,,,C4XBk+ZNEUGBPgymo0uyTA,ylHc0htaS+KVsyNn/MUGug,,,N,0,0,,,2014-04-05 12:28,2014-04-05 13:21,admin,admin,
2533,142276,1749,36569,642,0,N,N,N,CP_Drtn,TT_Task,DT_FixedDUR2,TK_NotStart,P7-MEP-PL-B1-2010,High Level Drainage Pipes Installation,,1032,0,168,0,244.38,244.38,168,6583.525267,0,6583.525267,,,,2016-01-03 08:00,2016-01-23 16:00,,2015-08-27 08:00,2015-09-16 16:00,2015-08-27 08:00,2015-09-16 16:00,2015-08-27 08:00,2015-09-16 16:00,2016-01-03 08:00,2016-01-23 16:00,,PT_Normal,,,,,1fceKPNeQk25ns/G+GZbSg,rZHGs6miQWiQETKF0TarJQ,,,N,0,0,,,2014-04-05 12:28,2014-04-05 13:21,admin,admin,
2534,142277,1749,36569,642,0,N,N,N,CP_Drtn,TT_Task,DT_FixedDUR2,TK_NotStart,P7-MEP-PL-B1-2040,Water Supply Pipes Pressure Test,4456,976,496,48,0,48,48,48,151.744312,0,151.744312,,,,2016-01-17 08:00,2016-01-22 16:00,,2015-09-17 08:00,2015-09-22 16:00,2015-09-17 08:00,2015-09-22 16:00,2015-09-17 08:00,2015-09-22 16:00,2016-01-17 08:00,2016-01-22 16:00,,PT_Normal,,,,,Tzty7brTP0KUo6EcfDuIoA,ofJV6n+ETw+AglF4KonU9w,,,N,0,0,,,2014-04-05 12:28,2014-04-05 13:21,admin,admin,
2535,142278,1749,36569,642,0,N,N,N,CP_Drtn,TT_Task,DT_FixedDUR2,TK_NotStart,P7-MEP-PL-B1-2020,Drainage Pipes Gravity Test,,1032,0,48,0,48,48,48,826.240719,0,826.240719,,,,2016-01-24 08:00,2016-01-29 16:00,,2015-09-17 08:00,2015-09-22 16:00,2015-09-17 08:00,2015-09-22 16:00,2015-09-17 08:00,2015-09-22 16:00,2016-01-24 08:00,2016-01-29 16:00,,PT_Normal,,,,,FJzY3qvHOUWUki3VCxuLtA,nCtfcmkVQ5+z+oQR3KxX7A,,,N,0,0,,,2014-04-05 12:28,2014-04-05 13:21,admin,admin,
2536,142279,1749,36201,642,0,N,N,N,CP_Drtn,TT_Task,DT_FixedDUR2,TK_NotStart,P7-MEP-EL-B1-1010,PVC Back Boxes and Conduits  Fixing in Wall,,896,0,96,0,384,384,96,3319.67233,0,3319.67233,,,,2015-12-05 08:00,2015-12-16 16:00,,2015-08-15 08:00,2015-08-26 16:00,2015-08-15 08:00,2015-08-26 16:00,2015-08-15 08:00,2015-08-26 16:00,2015-12-05 08:00,2015-12-16 16:00,,PT_Normal,,,,,MBBM7TTPCEC9FmXCVWTEag,9TAku6TJQrye5WMxujX9/Q,,,N,0,0,,,2014-04-05 12:28,2014-04-05 13:21,admin,admin,
2537,142280,1749,36201,642,0,N,N,N,CP_Drtn,TT_Task,DT_FixedDUR2,TK_NotStart,P7-MEP-EL-B1-1000,DB's Inclosure Fixing,4455,896,0,48,0,96,96,48,2136.399392,0,2136.399392,,,,2015-12-17 08:00,2015-12-22 16:00,,2015-08-27 08:00,2015-09-01 16:00,2015-08-27 08:00,2015-09-01 16:00,2015-08-27 08:00,2015-09-01 16:00,2015-12-17 08:00,2015-12-22 16:00,,PT_Normal,,,,,WwttlClPnEafD9NeGVWGRA,6WOVQpJTRk6Uy7j9eVWlRQ,,,N,0,0,,,2014-04-05 12:28,2014-04-05 13:21,admin,admin,
2538,142281,1749,36243,642,0,N,N,N,CP_Drtn,TT_Task,DT_FixedDUR2,TK_NotStart,P7-MEP-EL-B1-2010,"SMDB's , MDB's  Installation",,1056,160,96,0,336,336,96,4208.598932,0,4208.598932,,,,2016-01-06 08:00,2016-01-17 16:00,,2015-08-27 08:00,2015-09-07 16:00,2015-08-27 08:00,2015-09-07 16:00,2015-08-27 08:00,2015-09-07 16:00,2016-01-06 08:00,2016-01-17 16:00,,PT_Normal,,,,,vPwbCQoWhEKBSByVepHJDA,pNjpps3qTNG/ysMTSDXg2Q,,,N,0,0,,,2014-04-05 12:28,2014-04-05 13:21,admin,admin,
2539,142282,1749,36243,642,0,N,N,N,CP_Drtn,TT_Task,DT_FixedDUR2,TK_NotStart,P7-MEP-EL-B1-2060,BMS System Wiring,,1184,288,64,0,186,186,64,15191.435697,0,15191.435697,,,,2016-01-22 08:00,2016-01-29 16:00,,2015-08-27 08:00,2015-09-03 16:00,2015-08-27 08:00,2015-09-03 16:00,2015-08-27 08:00,2015-09-03 16:00,2016-01-22 08:00,2016-01-29 16:00,,PT_Normal,,,,,cO4rKodmWEihdiyHfPuBoA,8ymkdLiASUKOOUbTOIH24Q,,,N,0,0,,,2014-04-05 12:28,2014-04-05 13:21,admin,admin,
2540,142283,1749,36243,642,0,N,N,N,CP_Drtn,TT_Task,DT_FixedDUR2,TK_NotStart,P7-MEP-EL-B1-2040,Lighting  Wiring,,944,48,96,0,241.713,241.713,96,3578.08423,0,3578.08423,,,,2015-12-23 08:00,2016-01-03 16:00,,2015-08-27 08:00,2015-09-07 16:00,2015-08-27 08:00,2015-09-07 16:00,2015-08-27 08:00,2015-09-07 16:00,2015-12-23 08:00,2016-01-03 16:00,,PT_Normal,,,,,+lFC5dTJGUCvB+O5kIUAjw,/BXhDucSRMWRU71pR9wU3Q,,,N,0,0,,,2014-04-05 12:28,2014-04-05 13:21,admin,admin,
2541,142284,1749,36243,642,0,N,N,N,CP_Drtn,TT_Task,DT_FixedDUR2,TK_NotStart,P7-MEP-EL-B1-2050,Power Points Wiring,,944,48,96,0,192,192,96,2906.213289,0,2906.213289,,,,2015-12-23 08:00,2016-01-03 16:00,,2015-08-27 08:00,2015-09-07 16:00,2015-08-27 08:00,2015-09-07 16:00,2015-08-27 08:00,2015-09-07 16:00,2015-12-23 08:00,2016-01-03 16:00,,PT_Normal,,,,,Qmj7rJKUw0GbZoMHB3c+HA,ARpocY3rTBmK9JJgDaDjYA,,,N,0,0,,,2014-04-05 12:28,2014-04-05 13:21,admin,admin,
2542,142285,1749,36243,642,0,N,N,N,CP_Drtn,TT_Task,DT_FixedDUR2,TK_NotStart,P7-MEP-EL-B1-2020,Cable Tray and Trunking Installation,,944,48,168,0,504,504,168,9085.448617,0,9085.448617,,,,2015-12-14 08:00,2016-01-03 16:00,,2015-08-18 08:00,2015-09-07 16:00,2015-08-18 08:00,2015-09-07 16:00,2015-08-18 08:00,2015-09-07 16:00,2015-12-14 08:00,2016-01-03 16:00,,PT_Normal,,,,,ysA5nCgKWE25VMIZrx036A,v5OhU2caTDa/y1Oe10l83g,,,N,0,0,,,2014-04-05 12:28,2014-04-05 13:21,admin,admin,
2543,142286,1749,36243,642,0,N,N,N,CP_Drtn,TT_Task,DT_FixedDUR2,TK_NotStart,P7-MEP-EL-B1-2070,Emergency Light Wiring,,1224,136,64,0,128,128,64,1210.028798,0,1210.028798,,,,2016-01-27 08:00,2016-02-03 16:00,,2015-08-27 08:00,2015-09-03 16:00,2015-08-27 08:00,2015-09-03 16:00,2015-08-27 08:00,2015-09-03 16:00,2016-01-27 08:00,2016-02-03 16:00,,PT_Normal,,,,,cjt/tqWAUEuJ+/53mcO9Bg,OwWMdliNShGOqgwYrOXhfw,,,N,0,0,,,2014-04-05 12:28,2014-04-05 13:21,admin,admin,
2544,142287,1749,36243,642,0,N,N,N,CP_Drtn,TT_Task,DT_FixedDUR2,TK_NotStart,P7-MEP-EL-B1-2030,Fire Alarm System Wiring,,1096,0,96,0,192,192,96,7123.009694,0,7123.009694,,,,2016-01-11 08:00,2016-01-22 16:00,,2015-08-27 08:00,2015-09-07 16:00,2015-08-27 08:00,2015-09-07 16:00,2015-08-27 08:00,2015-09-07 16:00,2016-01-11 08:00,2016-01-22 16:00,,PT_Normal,,,,,1uVb0K6zRU6u5hukL80mZA,l7yxwAFrRxyQMtZy3YgY4Q,,,N,0,0,,,2014-04-05 12:28,2014-04-05 13:21,admin,admin,
2545,142288,1749,36243,642,0,N,N,N,CP_Drtn,TT_Task,DT_FixedDUR2,TK_NotStart,P7-MEP-EL-B1-2000,DB's Installation and Termination,4455,896,0,96,0,288,288,96,4982.925025,0,4982.925025,,,,2015-12-23 08:00,2016-01-03 16:00,,2015-09-02 08:00,2015-09-13 16:00,2015-09-02 08:00,2015-09-13 16:00,2015-09-02 08:00,2015-09-13 16:00,2015-12-23 08:00,2016-01-03 16:00,,PT_Normal,,,,,ubgWDaGPFkifBBgptXmwHA,nVUD9+4kSqCrSXW8nqT8fw,,,N,0,0,,,2014-04-05 12:28,2014-04-05 13:21,admin,admin,
2546,142289,1749,36241,642,0,N,N,N,CP_Drtn,TT_Task,DT_FixedDUR2,TK_NotStart,P7-MEP-EL-B1-3020,Lights Fitting Fixing,,896,592,112,0,244,244,112,7336.659378,0,7336.659378,,,,2016-01-30 08:00,2016-02-12 16:00,,2015-10-10 08:00,2015-10-23 16:00,2015-10-10 08:00,2015-10-23 16:00,2015-10-10 08:00,2015-10-23 16:00,2016-01-30 08:00,2016-02-12 16:00,,PT_Normal,,,,,I3oGhzPXi0qV/+xx3x0FwQ,gW2XhYSKRe27tuH6xtN0Vw,,,N,0,0,,,2014-04-05 12:28,2014-04-05 13:21,admin,admin,
2547,142290,1749,36241,642,0,N,N,N,CP_Drtn,TT_Task,DT_FixedDUR2,TK_NotStart,P7-MEP-EL-B1-3050,Sockets and Switches Fixing,,1088,0,64,0,128,128,64,1174.957134,0,1174.957134,,,,2016-02-04 08:00,2016-02-11 16:00,,2015-09-21 08:00,2015-09-28 16:00,2015-09-21 08:00,2015-09-28 16:00,2015-09-21 08:00,2015-09-28 16:00,2016-02-04 08:00,2016-02-11 16:00,,PT_Normal,,,,,5U0Z44b1n0CpBvyvv4EbEw,qWpE68UrSQSjdnToI4j5ug,,,N,0,0,,,2014-04-05 12:28,2014-04-05 13:21,admin,admin,
2548,142291,1749,36241,642,0,N,N,N,CP_Drtn,TT_Task,DT_FixedDUR2,TK_NotStart,P7-MEP-EL-B1-3060,Emergency Light Fixing,,1088,448,64,0,128,128,64,5722.024623,0,5722.024623,,,,2016-02-04 08:00,2016-02-11 16:00,,2015-09-21 08:00,2015-09-28 16:00,2015-09-21 08:00,2015-09-28 16:00,2015-09-21 08:00,2015-09-28 16:00,2016-02-04 08:00,2016-02-11 16:00,,PT_Normal,,,,,3MkUZTvlvEqr4pMJBtWBtQ,1CjrAErCQz2ntOqo31pNsA,,,N,0,0,,,2014-04-05 12:28,2014-04-05 13:21,admin,admin,
2549,142292,1749,36241,642,0,N,N,N,CP_Drtn,TT_Task,DT_FixedDUR2,TK_NotStart,P7-MEP-EL-B1-3000,CO2 System Installation,,1136,456,48,0,179.65,179.65,48,21033.761938,0,21033.761938,,,,2016-02-11 08:00,2016-02-16 16:00,,2015-09-22 08:00,2015-09-27 16:00,2015-09-22 08:00,2015-09-27 16:00,2015-09-22 08:00,2015-09-27 16:00,2016-02-11 08:00,2016-02-16 16:00,,PT_Normal,,,,,R1dJaLDcsESwDounCmUzww,W73dprPlR7aQ1aRxTiRUvQ,,,N,0,0,,,2014-04-05 12:28,2014-04-05 13:21,admin,admin,
2550,142293,1749,36241,642,0,N,N,N,CP_Drtn,TT_Task,DT_FixedDUR2,TK_NotStart,P7-MEP-EL-B1-3010,Fire Alarm System Detector Installation,,1096,8,96,0,192,192,96,4046.378277,0,4046.378277,,,,2016-01-23 08:00,2016-02-03 16:00,,2015-09-08 08:00,2015-09-19 16:00,2015-09-08 08:00,2015-09-19 16:00,2015-09-08 08:00,2015-09-19 16:00,2016-01-23 08:00,2016-02-03 16:00,,PT_Normal,,,,,oTqye7fmYECSJUERZ+aeRw,3aoaeHBFQeOFMxfJNgmmwA,,,N,0,0,,,2014-04-05 12:28,2014-04-05 13:21,admin,admin,
2551,142294,1749,36241,642,0,N,N,N,CP_Drtn,TT_Task,DT_FixedDUR2,TK_NotStart,P7-MEP-EL-B1-3030,"SMDB's  , MDB's Termination and Final Connection",,896,0,96,0,384,384,96,20737.637079,0,20737.637079,,,,2016-01-18 08:00,2016-01-29 16:00,,2015-09-28 08:00,2015-10-09 16:00,2015-09-28 08:00,2015-10-09 16:00,2015-09-28 08:00,2015-10-09 16:00,2016-01-18 08:00,2016-01-29 16:00,,PT_Normal,,,,,fESI9HWdRkOtf+5ATQc/Jw,aYPpjQ86RxeM2a346XDAug,,,N,0,0,,,2014-04-05 12:28,2014-04-05 13:21,admin,admin,
2552,142295,1749,36243,642,0,N,N,N,CP_Drtn,TT_Task,DT_FixedDUR2,TK_NotStart,P7-MEP-EL-B1-3040,Power Cable Puling,,896,0,112,0,168,168,112,13646.333768,0,13646.333768,,,,2016-01-04 08:00,2016-01-17 16:00,,2015-09-14 08:00,2015-09-27 16:00,2015-09-14 08:00,2015-09-27 16:00,2015-09-14 08:00,2015-09-27 16:00,2016-01-04 08:00,2016-01-17 16:00,,PT_Normal,,,,,oKvCS8Ej2kCeA6gV1IENjw,rhnHh8rRQWilHskyXQ/QFA,,,N,0,0,,,2014-04-05 12:28,2014-04-05 13:21,admin,admin,
2553,142296,1749,35782,642,0,N,N,N,CP_Drtn,TT_Task,DT_FixedDUR2,TK_NotStart,BL1-ST-B2-1020,Formwork,4433,0,0,112,0,527.561951,527.561951,112,14,0,14,,,,2014-02-18 08:00,2014-03-05 16:00,,2014-02-18 08:00,2014-03-05 16:00,2014-02-18 08:00,2014-03-05 16:00,2014-02-18 08:00,2014-03-05 16:00,2014-02-18 08:00,2014-03-05 16:00,,PT_Normal,,,,,ZCx7NLFUGkGTXLVh5Vmelw,Hl4blv4/Q7upOTI8O8WQEQ,,,Y,0,0,,,2014-04-05 12:28,2014-04-05 13:21,admin,admin,
2554,142297,1749,35782,642,0,N,N,N,CP_Drtn,TT_Task,DT_FixedDUR2,TK_NotStart,BL1-ST-B2-1010,Waterproofing,4433,0,0,80,0,1801.20071,1801.20071,80,7928.902,0,7928.902,,,,2014-02-06 08:00,2014-02-17 16:00,,2014-02-06 08:00,2014-02-17 16:00,2014-02-06 08:00,2014-02-17 16:00,2014-02-06 08:00,2014-02-17 16:00,2014-02-06 08:00,2014-02-17 16:00,,PT_Normal,,,,,VjY7gzIb3kGsZ5jyq/LYkQ,PuVYpGbvRFW1/gLYYU+DDg,,,Y,0,0,,,2014-04-05 12:28,2014-04-05 13:21,admin,admin,
2555,142298,1749,35782,642,0,N,N,N,CP_Drtn,TT_Task,DT_FixedDUR2,TK_NotStart,BL1-ST-B2-1030,Reinforcement,4433,0,0,176,0,3429.96682,3429.96682,176,229343.26,0,229343.26,,,,2014-03-06 08:00,2014-03-31 16:00,,2014-03-06 08:00,2014-03-31 16:00,2014-03-06 08:00,2014-03-31 16:00,2014-03-06 08:00,2014-03-31 16:00,2014-03-06 08:00,2014-03-31 16:00,,PT_Normal,,,,,yR2HOxVIg0a4rkmxvN474A,qtcGBb08R96dDUkxu809Pg,,,Y,0,0,,,2014-04-05 12:28,2014-04-05 13:21,admin,admin,
2556,142299,1749,35782,642,0,N,N,N,CP_Drtn,TT_Task,DT_FixedDUR2,TK_NotStart,BL1-ST-B2-1060,Concrete,4433,0,0,8,0,14807.556735,14807.556735,8,248565.424,0,248565.424,,,,2014-04-01 08:00,2014-04-01 16:00,,2014-04-01 08:00,2014-04-01 16:00,2014-04-01 08:00,2014-04-01 16:00,2014-04-01 08:00,2014-04-01 16:00,2014-04-01 08:00,2014-04-01 16:00,,PT_Normal,,,,,uc5sKAQ5VkuhvR8nT0nclw,H9qEjOzdRy6PGaz6S5zZdg,,,Y,0,0,,,2014-04-05 12:28,2014-04-05 13:21,admin,admin,
2557,142300,1749,35782,642,0,N,N,N,CP_Drtn,TT_Task,DT_FixedDUR2,TK_NotStart,BL1-ST-B2-1000,Blinding,,0,0,40,0,137,137,40,5,0,5,,,,2014-02-01 08:00,2014-02-05 16:00,,2014-02-01 08:00,2014-02-05 16:00,2014-02-01 08:00,2014-02-05 16:00,2014-02-01 08:00,2014-02-05 16:00,2014-02-01 08:00,2014-02-05 16:00,,PT_Normal,,,,,wcHLbVhLo0KY65d8CI4LAQ,yIJfPXaLR+6q++DUZNEGPg,,,Y,0,0,,,2014-04-05 12:28,2014-04-05 13:21,admin,admin,
2558,142301,1749,35782,642,0,N,N,N,CP_Drtn,TT_Task,DT_FixedDUR2,TK_NotStart,BL1-ST-B2-1040,MEP Works in Raft,4456,0,0,40,0,312,312,40,13056.000019,0,13056.000019,,,,2014-03-26 08:00,2014-03-31 16:00,,2014-03-26 08:00,2014-03-31 16:00,2014-03-26 08:00,2014-03-31 16:00,2014-03-26 08:00,2014-03-31 16:00,2014-03-26 08:00,2014-03-31 16:00,,PT_Normal,,,,,sK350WYRqEWJiEvyg1fEnw,PKw2os03TMWcE0Fl/as4aQ,,,Y,0,0,,,2014-04-05 12:28,2014-04-05 13:21,admin,admin,
2559,142302,1749,35782,642,0,N,N,N,CP_Drtn,TT_Task,DT_FixedDUR2,TK_NotStart,BL1-ST-B2-1050,Earthing Works,4480,0,0,40,0,408,408,40,8367.291801,0,8367.291801,,,,2014-03-26 08:00,2014-03-31 16:00,,2014-03-26 08:00,2014-03-31 16:00,2014-03-26 08:00,2014-03-31 16:00,2014-03-26 08:00,2014-03-31 16:00,2014-03-26 08:00,2014-03-31 16:00,,PT_Normal,,,,,/dPjSygrm0WSAHQIkMkwmw,xTAKHUC8TKOeDf8vWa65SA,,,Y,0,0,,,2014-04-05 12:28,2014-04-05 13:21,admin,admin,
2560,142303,1749,35736,642,0,N,N,N,CP_Drtn,TT_Task,DT_FixedDUR2,TK_NotStart,BL1-FN-B2-1000,Block Works,4433,1028,0,240,0,574.5,574.5,240,7667.840379,0,7667.840379,,,,2015-01-26 12:00,2015-03-02 12:00,,2014-08-19 08:00,2014-09-22 16:00,2014-08-19 08:00,2014-09-22 16:00,2014-08-19 08:00,2014-09-22 16:00,2015-01-26 12:00,2015-03-02 12:00,,PT_Normal,,,,,VaadwR1pnUKfRK3m2WpTOw,wzvuRK8JQASh+J9DIv1gJg,,,N,0,0,,,2014-04-05 12:28,2014-04-05 13:21,admin,admin,
2561,142304,1749,35736,642,0,N,N,N,CP_Drtn,TT_Task,DT_FixedDUR2,TK_NotStart,BL1-FN-B2-1010,Plaster,4433,1052,0,240,0,591,591,240,6975.7493,0,6975.7493,,,,2015-03-05 12:00,2015-04-09 12:00,,2014-09-23 08:00,2014-11-04 16:00,2014-09-23 08:00,2014-11-04 16:00,2014-09-23 08:00,2014-11-04 16:00,2015-03-05 12:00,2015-04-09 12:00,,PT_Normal,,,,,LQz6KB1rx0O+2Dc2EZVaKQ,3LzLDdrET3C1C9D8Ud1HHA,,,N,0,0,,,2014-04-05 12:28,2014-04-05 13:21,admin,admin,
2562,142305,1749,35736,642,0,N,N,N,CP_Drtn,TT_Task,DT_FixedDUR2,TK_NotStart,BL1-FN-B2-1020,Paint 1st Coat,4433,1052,0,120,0,121.5,121.5,120,748.131064,0,748.131064,,,,2015-04-09 12:00,2015-04-27 12:00,,2014-11-05 08:00,2014-11-22 16:00,2014-11-05 08:00,2014-11-22 16:00,2014-11-05 08:00,2014-11-22 16:00,2015-04-09 12:00,2015-04-27 12:00,,PT_Normal,,,,,eHGlxLVczEWfmfr3sNMXSw,U230fdRtRQO/TrPEqvnl2Q,,,N,0,0,,,2014-04-05 12:28,2014-04-05 13:21,admin,admin,
2563,142306,1749,35736,642,0,N,N,N,CP_Drtn,TT_Task,DT_FixedDUR2,TK_NotStart,BL1-FN-B2-1030,Ceiling Paint,4433,1052,0,80,0,19.8,19.8,80,129.450629,0,129.450629,,,,2015-04-21 12:00,2015-05-03 12:00,,2014-11-17 08:00,2014-11-27 16:00,2014-11-17 08:00,2014-11-27 16:00,2014-11-17 08:00,2014-11-27 16:00,2015-04-21 12:00,2015-05-03 12:00,,PT_Normal,,,,,7n/Rn4FsMEinAzc3ZFNnGg,TbJv3TClQsWmKD8Z5xR1xA,,,N,0,0,,,2014-04-05 12:28,2014-04-05 13:21,admin,admin,
2564,142307,1749,35736,642,0,N,N,N,CP_Drtn,TT_Task,DT_FixedDUR2,TK_NotStart,BL1-FN-B2-1040,Waterproofing,4433,1052,0,40,0,3.3,3.3,40,69.704307,0,69.704307,,,,2015-05-03 12:00,2015-05-09 12:00,,2014-11-29 08:00,2014-12-03 16:00,2014-11-29 08:00,2014-12-03 16:00,2014-11-29 08:00,2014-12-03 16:00,2015-05-03 12:00,2015-05-09 12:00,,PT_Normal,,,,,0C59ku4TbkOPEdsPi92hTQ,tRhoqxIDSaimnAyRT7MGWA,,,N,0,0,,,2014-04-05 12:28,2014-04-05 13:21,admin,admin,
2565,142308,1749,35736,642,0,N,N,N,CP_Drtn,TT_Task,DT_FixedDUR2,TK_NotStart,BL1-FN-B2-1060,Flooring Works,4433,1052,0,160,0,144.5,144.5,160,3387.875514,0,3387.875514,,,,2015-05-09 12:00,2015-06-01 12:00,,2014-12-04 08:00,2014-12-27 16:00,2014-12-04 08:00,2014-12-27 16:00,2014-12-04 08:00,2014-12-27 16:00,2015-05-09 12:00,2015-06-01 12:00,,PT_Normal,,,,,EIIZ1IOu3UOxACi5gRFSdA,S2Y8ZEVuQ7K3EQCGK+JPvQ,,,N,0,0,,,2014-04-05 12:28,2014-04-05 13:21,admin,admin,
2566,142309,1749,35736,642,0,N,N,N,CP_Drtn,TT_Task,DT_FixedDUR2,TK_NotStart,BL1-FN-B2-1100,Final Paint,,1520,0,80,0,0,0,80,10,0,10,,,,2015-12-28 08:00,2016-01-06 16:00,,2015-06-21 08:00,2015-06-30 16:00,2015-06-21 08:00,2015-06-30 16:00,2015-06-21 08:00,2015-06-30 16:00,2015-12-28 08:00,2016-01-06 16:00,,PT_Normal,,,,,N1wocDSJV0qXBiV7v5cehw,5rA5yd7jQGmspyh6J+Zvzg,,,N,0,0,,,2014-04-05 12:28,2014-04-05 13:21,admin,admin,
2567,142310,1749,35736,642,0,N,N,N,CP_Drtn,TT_Task,DT_FixedDUR2,TK_NotStart,BL1-FN-B2-1050,Wall Tiling,4433,1196,184,80,0,620,620,80,2760.977363,0,2760.977363,,,,2015-05-24 12:00,2015-06-04 12:00,,2014-11-29 08:00,2014-12-09 16:00,2014-11-29 08:00,2014-12-09 16:00,2014-11-29 08:00,2014-12-09 16:00,2015-05-24 12:00,2015-06-04 12:00,,PT_Normal,,,,,qg6hODc8BEehZBUmUE1PvA,f55uqy6LRba76pP6hSDmtQ,,,N,0,0,,,2014-04-05 12:28,2014-04-05 13:21,admin,admin,
2568,142311,1749,35736,642,0,N,N,N,CP_Drtn,TT_Task,DT_FixedDUR2,TK_NotStart,BL1-FN-B2-1070,False Ceiling,4433,1012,0,120,0,240,240,120,2028.725365,0,2028.725365,,,,2015-06-04 12:00,2015-06-19 12:00,,2015-01-08 08:00,2015-01-25 16:00,2015-01-08 08:00,2015-01-25 16:00,2015-01-08 08:00,2015-01-25 16:00,2015-06-04 12:00,2015-06-19 12:00,,PT_Normal,,,,,lD5MTJltjkS0Y9RGgjzh2g,cCSYgVCxR1+YY59l2144Zg,,,N,0,0,,,2014-04-05 12:28,2014-04-05 13:21,admin,admin,
2569,142312,1749,35736,642,0,N,N,N,CP_Drtn,TT_Task,DT_FixedDUR2,TK_NotStart,BL1-FN-B2-1080,Hand Rails for Stairs,4433,1012,0,120,0,43,43,120,9498.792932,0,9498.792932,,,,2015-06-19 12:00,2015-07-04 12:00,,2015-01-26 08:00,2015-02-11 16:00,2015-01-26 08:00,2015-02-11 16:00,2015-01-26 08:00,2015-02-11 16:00,2015-06-19 12:00,2015-07-04 12:00,,PT_Normal,,,,,ArgsP2/5JEqP5/2oUu/vSg,upEoVd8PSTme4gBt0MQ4AA,,,N,0,0,,,2014-04-05 12:28,2014-04-05 13:21,admin,admin,
2570,142313,1749,35736,642,0,N,N,N,CP_Drtn,TT_Task,DT_FixedDUR2,TK_NotStart,BL1-FN-B2-1090,Doors Installation,,1012,0,120,0,0,0,120,31153.46,0,31153.46,,,,2015-07-04 12:00,2015-07-19 12:00,,2015-02-12 08:00,2015-03-01 16:00,2015-02-12 08:00,2015-03-01 16:00,2015-02-12 08:00,2015-03-01 16:00,2015-07-04 12:00,2015-07-19 12:00,,PT_Normal,,,,,OG+1KsFoW06peBs1xJQ81A,CGCoqBKsQR20EhuAc+/9gQ,,,N,0,0,,,2014-04-05 12:28,2014-04-05 13:21,admin,admin,
2571,142314,1749,35684,642,0,N,N,N,CP_Drtn,TT_Task,DT_FixedDUR2,TK_NotStart,BL1-ST-B1-1000,Reinforcement for Verticals,4433,484,0,184,0,946.627278,946.627278,184,63312.9638,0,63312.9638,,,,2014-06-16 12:00,2014-07-23 14:00,,2014-04-06 08:00,2014-05-03 16:00,2014-04-06 08:00,2014-05-03 16:00,2014-04-06 08:00,2014-05-03 16:00,2014-06-16 12:00,2014-07-23 14:00,,PT_Normal,,,,,4V1jFKRrGEGwjLcoG6aXKA,9bP+wp5gThKfyoaTHe5sOw,,,N,0,0,,,2014-04-05 12:28,2014-04-05 13:21,admin,admin,
2572,142315,1749,35684,642,0,N,N,N,CP_Drtn,TT_Task,DT_FixedDUR2,TK_NotStart,BL1-ST-B1-1020,FW for Verticals,4433,484,24,96,0,4941.106154,4941.106154,96,21735.264,0,21735.264,,,,2014-07-24 10:00,2014-08-11 12:00,,2014-05-04 08:00,2014-05-17 16:00,2014-05-04 08:00,2014-05-17 16:00,2014-05-04 08:00,2014-05-17 16:00,2014-07-24 10:00,2014-08-11 12:00,,PT_Normal,,,,,pSg7xMkk50a51V4XtSICiw,tlZWLIiMQ5Wfva/kyQLvRQ,,,N,0,0,,,2014-04-05 12:28,2014-04-05 13:21,admin,admin,
2573,142316,1749,35684,642,0,N,N,N,CP_Drtn,TT_Task,DT_FixedDUR2,TK_NotStart,BL1-ST-B1-1030,Concrete Verticals,4433,460,0,8,0,945.622231,945.622231,8,15874.45,0,15874.45,,,,2014-08-11 12:00,2014-08-12 12:00,,2014-05-21 08:00,2014-05-21 16:00,2014-05-21 08:00,2014-05-21 16:00,2014-05-21 08:00,2014-05-21 16:00,2014-08-11 12:00,2014-08-12 12:00,,PT_Normal,,,,,62SmHnqZ3EKYO7bYU/ZGMw,qZjG4ghcQtagfP9/nxUziw,,,N,0,0,,,2014-04-05 12:28,2014-04-05 13:21,admin,admin,
2574,142317,1749,35684,642,0,N,N,N,CP_Drtn,TT_Task,DT_FixedDUR2,TK_NotStart,BL1-ST-B1-1040,FW for Slab,4433,460,0,64,0,9113,9113,64,35675.756,0,35675.756,,,,2014-08-12 12:00,2014-08-21 12:00,,2014-05-22 08:00,2014-05-31 16:00,2014-05-22 08:00,2014-05-31 16:00,2014-05-22 08:00,2014-05-31 16:00,2014-08-12 12:00,2014-08-21 12:00,,PT_Normal,,,,,smA0KvBoC0W/a5GlH347Og,1vyOUi4HR92ioqQU1MCfqQ,,,N,0,0,,,2014-04-05 12:28,2014-04-05 13:21,admin,admin,
2575,142318,1749,35684,642,0,N,N,N,CP_Drtn,TT_Task,DT_FixedDUR2,TK_NotStart,BL1-ST-B1-1050,Reinforcement for Slab,4433,460,0,96,0,949.94169,949.94169,96,63523.56,0,63523.56,,,,2014-08-21 12:00,2014-09-04 12:00,,2014-06-01 08:00,2014-06-14 16:00,2014-06-01 08:00,2014-06-14 16:00,2014-06-01 08:00,2014-06-14 16:00,2014-08-21 12:00,2014-09-04 12:00,,PT_Normal,,,,,nomyokaiDU2VABVN9Hpd7A,9VYpB+GyRvydsbrl8q1ahw,,,N,0,0,,,2014-04-05 12:28,2014-04-05 13:21,admin,admin,
2576,142319,1749,35684,642,0,N,N,N,CP_Drtn,TT_Task,DT_FixedDUR2,TK_NotStart,BL1-ST-B1-1070,Concrete for Slab,4433,460,0,8,0,2484.4374,2484.4374,8,41705.3842,0,41705.3842,,,,2014-09-04 12:00,2014-09-06 12:00,,2014-06-15 08:00,2014-06-15 16:00,2014-06-15 08:00,2014-06-15 16:00,2014-06-15 08:00,2014-06-15 16:00,2014-09-04 12:00,2014-09-06 12:00,,PT_Normal,,,,,pS1JQfXD1U6c5FaGpC87BA,2zGzJfhnSF22bOW3GdtjuA,,,N,0,0,,,2014-04-05 12:28,2014-04-05 13:21,admin,admin,
2577,142320,1749,35684,642,0,N,N,N,CP_Drtn,TT_Task,DT_FixedDUR2,TK_NotStart,BL1-ST-B1-1010,MEP Works in Vertical Element,,460,0,40,0,160,160,40,1803.546829,0,1803.546829,,,,2014-08-05 12:00,2014-08-11 12:00,,2014-05-15 08:00,2014-05-20 16:00,2014-05-15 08:00,2014-05-20 16:00,2014-05-15 08:00,2014-05-20 16:00,2014-08-05 12:00,2014-08-11 12:00,,PT_Normal,,,,,8C1LWb3oaUie87qmQvHJhA,abG37rEvTXuWIqSjYGa1Ig,,,N,0,0,,,2014-04-05 12:28,2014-04-05 13:21,admin,admin,
2578,142321,1749,35684,642,0,N,N,N,CP_Drtn,TT_Task,DT_FixedDUR2,TK_NotStart,BL1-ST-B1-1060,MEP Works in Slab & Beams,,460,0,40,0,320,320,40,3354.018234,0,3354.018234,,,,2014-08-30 12:00,2014-09-04 12:00,,2014-06-09 08:00,2014-06-14 16:00,2014-06-09 08:00,2014-06-14 16:00,2014-06-09 08:00,2014-06-14 16:00,2014-08-30 12:00,2014-09-04 12:00,,PT_Normal,,,,,tVGp+aUBjESixiMo7W1xAw,bzMkfiyXRn61g6iZNfzJvg,,,N,0,0,,,2014-04-05 12:28,2014-04-05 13:21,admin,admin,
2579,142322,1749,35846,642,0,N,N,N,CP_Drtn,TT_Task,DT_FixedDUR2,TK_NotStart,BL1-FN-B1-1000,Block Works,4433,932,0,160,0,574.5,574.5,160,7657.840379,0,7657.840379,,,,2015-02-21 12:00,2015-03-16 12:00,,2014-09-28 08:00,2014-10-26 16:00,2014-09-28 08:00,2014-10-26 16:00,2014-09-28 08:00,2014-10-26 16:00,2015-02-21 12:00,2015-03-16 12:00,,PT_Normal,,,,,E8bSTzny/kCV3jtM1BjGhA,yspitxVrTZa80aW0Qy+Hgw,,,N,0,0,,,2014-04-05 12:28,2014-04-05 13:21,admin,admin,
2580,142323,1749,35846,642,0,N,N,N,CP_Drtn,TT_Task,DT_FixedDUR2,TK_NotStart,BL1-FN-B1-1010,Plaster,4433,932,0,144,0,738.9,738.9,144,8702.331769,0,8702.331769,,,,2015-04-06 12:00,2015-04-27 12:00,,2014-11-19 08:00,2014-12-09 16:00,2014-11-19 08:00,2014-12-09 16:00,2014-11-19 08:00,2014-12-09 16:00,2015-04-06 12:00,2015-04-27 12:00,,PT_Normal,,,,,Mq2gtJCFvUC8Vehv6NbhGA,WDsvbV6zSNiX8uiZLAe+0g,,,N,0,0,,,2014-04-05 12:28,2014-04-05 13:21,admin,admin,
2581,142324,1749,35846,642,0,N,N,N,CP_Drtn,TT_Task,DT_FixedDUR2,TK_NotStart,BL1-FN-B1-1020,Paint 1st Coat,4433,932,0,120,0,151.8,151.8,120,931.427943,0,931.427943,,,,2015-04-27 12:00,2015-05-14 12:00,,2014-12-10 08:00,2014-12-27 16:00,2014-12-10 08:00,2014-12-27 16:00,2014-12-10 08:00,2014-12-27 16:00,2015-04-27 12:00,2015-05-14 12:00,,PT_Normal,,,,,S2HkNVY8skyiAAPcS5AaLQ,wrM9Sg9YSWe4Cp8PXqeHxA,,,N,0,0,,,2014-04-05 12:28,2014-04-05 13:21,admin,admin,
2582,142325,1749,35846,642,0,N,N,N,CP_Drtn,TT_Task,DT_FixedDUR2,TK_NotStart,BL1-FN-B1-1030,Ceiling Paint,4433,932,0,80,0,39.6,39.6,80,248.94642,0,248.94642,,,,2015-05-09 12:00,2015-05-20 12:00,,2014-12-22 08:00,2015-01-04 16:00,2014-12-22 08:00,2015-01-04 16:00,2014-12-22 08:00,2015-01-04 16:00,2015-05-09 12:00,2015-05-20 12:00,,PT_Normal,,,,,087qBxo58kyO+VekM9vPzg,m4s+vaMPSjCeIyWbdM8coQ,,,N,0,0,,,2014-04-05 12:28,2014-04-05 13:21,admin,admin,
2583,142326,1749,35846,642,0,N,N,N,CP_Drtn,TT_Task,DT_FixedDUR2,TK_NotStart,BL1-FN-B1-1040,Waterproofing,4433,932,0,40,0,3.3,3.3,40,69.35431,0,69.35431,,,,2015-05-20 12:00,2015-05-26 12:00,,2015-01-05 08:00,2015-01-10 16:00,2015-01-05 08:00,2015-01-10 16:00,2015-01-05 08:00,2015-01-10 16:00,2015-05-20 12:00,2015-05-26 12:00,,PT_Normal,,,,,2Kb0NLIGtkiux+Z70EN/zA,X3eyMAJ6SdqPOBzAJRooXg,,,N,0,0,,,2014-04-05 12:28,2014-04-05 13:21,admin,admin,
2584,142327,1749,35846,642,0,N,N,N,CP_Drtn,TT_Task,DT_FixedDUR2,TK_NotStart,BL1-FN-B1-1060,Flooring Works,4433,932,0,160,0,818,818,160,19081.746381,0,19081.746381,,,,2015-05-26 12:00,2015-06-16 12:00,,2015-01-11 08:00,2015-02-02 16:00,2015-01-11 08:00,2015-02-02 16:00,2015-01-11 08:00,2015-02-02 16:00,2015-05-26 12:00,2015-06-16 12:00,,PT_Normal,,,,,KwtmjLhv1EC4qWGJtsh1EQ,2ZdD5KVeSougVmdqtOOhOw,,,N,0,0,,,2014-04-05 12:28,2014-04-05 13:21,admin,admin,
2585,142328,1749,35846,642,0,N,N,N,CP_Drtn,TT_Task,DT_FixedDUR2,TK_NotStart,BL1-FN-B1-1100,Final Paint,,1520,0,80,0,0,0,80,10,0,10,,,,2016-01-03 08:00,2016-01-12 16:00,,2015-06-27 08:00,2015-07-06 16:00,2015-06-27 08:00,2015-07-06 16:00,2015-06-27 08:00,2015-07-06 16:00,2016-01-03 08:00,2016-01-12 16:00,,PT_Normal,,,,,bikFFtzArUa9vXKXS/1f6g,Db3kKmviT1C6nTej9UUJaw,,,N,0,0,,,2014-04-05 12:28,2014-04-05 13:21,admin,admin,
2586,142329,1749,35846,642,0,N,N,N,CP_Drtn,TT_Task,DT_FixedDUR2,TK_NotStart,BL1-FN-B1-1050,Wall Tiling,4433,1076,336,80,0,776,776,80,3453.520054,0,3453.520054,,,,2015-06-09 12:00,2015-06-19 12:00,,2015-01-05 08:00,2015-01-15 16:00,2015-01-05 08:00,2015-01-15 16:00,2015-01-05 08:00,2015-01-15 16:00,2015-06-09 12:00,2015-06-19 12:00,,PT_Normal,,,,,qwjlsTsJ40qZeAMsXpnVWg,4O5hoDzPQ3uhF4kQ7XFmUA,,,N,0,0,,,2014-04-05 12:28,2014-04-05 13:21,admin,admin,
2587,142330,1749,35846,642,0,N,N,N,CP_Drtn,TT_Task,DT_FixedDUR2,TK_NotStart,BL1-FN-B1-1070,False Ceiling,4433,740,0,120,0,240,240,120,2028.815688,0,2028.815688,,,,2015-06-19 12:00,2015-07-04 12:00,,2015-03-07 08:00,2015-03-23 16:00,2015-03-07 08:00,2015-03-23 16:00,2015-03-07 08:00,2015-03-23 16:00,2015-06-19 12:00,2015-07-04 12:00,,PT_Normal,,,,,chftc5o3d0GWDVksS99E2g,c+tc5PyATjKEFSEosfpOaw,,,N,0,0,,,2014-04-05 12:28,2014-04-05 13:21,admin,admin,
2588,142331,1749,35846,642,0,N,N,N,CP_Drtn,TT_Task,DT_FixedDUR2,TK_NotStart,BL1-FN-B1-1080,Hand Rails for Stairs,4433,740,0,120,0,43,43,120,9498.792932,0,9498.792932,,,,2015-07-04 12:00,2015-07-19 12:00,,2015-03-24 08:00,2015-04-09 16:00,2015-03-24 08:00,2015-04-09 16:00,2015-03-24 08:00,2015-04-09 16:00,2015-07-04 12:00,2015-07-19 12:00,,PT_Normal,,,,,dEQm8rBOIUKsRS5q4ZY/KQ,WkA9jU1XRfONrZdYy+12Ew,,,N,0,0,,,2014-04-05 12:28,2014-04-05 13:21,admin,admin,
2589,142332,1749,35846,642,0,N,N,N,CP_Drtn,TT_Task,DT_FixedDUR2,TK_NotStart,BL1-FN-B1-1090,Doors Installation,,740,0,120,0,0,0,120,31780.061209,0,31780.061209,,,,2015-07-19 12:00,2015-08-03 12:00,,2015-04-11 08:00,2015-04-27 16:00,2015-04-11 08:00,2015-04-27 16:00,2015-04-11 08:00,2015-04-27 16:00,2015-07-19 12:00,2015-08-03 12:00,,PT_Normal,,,,,RgLJmz4FQUW7xmaoeFiY4Q,LPKVyBAGTEaW5ur4SEsrZg,,,N,0,0,,,2014-04-05 12:28,2014-04-05 13:21,admin,admin,
2590,142333,1749,35718,642,0,N,N,N,CP_Drtn,TT_Task,DT_FixedDUR2,TK_NotStart,BL1-ST-GF-1000,Reinforcement for Verticals,4433,460,0,96,0,946.627278,946.627278,96,63301.9638,0,63301.9638,,,,2014-09-06 12:00,2014-09-20 12:00,,2014-06-16 08:00,2014-06-30 16:00,2014-06-16 08:00,2014-06-30 16:00,2014-06-16 08:00,2014-06-30 16:00,2014-09-06 12:00,2014-09-20 12:00,,PT_Normal,,,,,NkQ1JPF4cEm6NbOYTPbUYA,IQHdmCfoR8y192YQ9+6Mig,,,N,0,0,,,2014-04-05 12:28,2014-04-05 13:21,admin,admin,
2591,142334,1749,35718,642,0,N,N,N,CP_Drtn,TT_Task,DT_FixedDUR2,TK_NotStart,BL1-ST-GF-1020,FW for Verticals,4433,460,0,64,0,7269,7269,64,26691.866,0,26691.866,,,,2014-09-20 12:00,2014-09-29 12:00,,2014-07-01 10:00,2014-07-16 14:00,2014-07-01 10:00,2014-07-16 14:00,2014-07-01 10:00,2014-07-16 14:00,2014-09-20 12:00,2014-09-29 12:00,,PT_Normal,,,,,TiG5p013qEeQ2xAgwMVPBg,rCvn1K7PQPanZw4JW4FANg,,,N,0,0,,,2014-04-05 12:28,2014-04-05 13:21,admin,admin,
2592,142335,1749,35718,642,0,N,N,N,CP_Drtn,TT_Task,DT_FixedDUR2,TK_NotStart,BL1-ST-GF-1030,Concrete Verticals,4433,460,0,8,0,1165.582184,1165.582184,8,19566.7525,0,19566.7525,,,,2014-09-29 12:00,2014-09-30 12:00,,2014-07-17 10:00,2014-07-18 14:00,2014-07-17 10:00,2014-07-18 14:00,2014-07-17 10:00,2014-07-18 14:00,2014-09-29 12:00,2014-09-30 12:00,,PT_Normal,,,,,zWPF+LiNREuAW/iqxyPevQ,Qgri5g4bSbS9VLyZN+WKIA,,,N,0,0,,,2014-04-05 12:28,2014-04-05 13:21,admin,admin,
2593,142336,1749,35718,642,0,N,N,N,CP_Drtn,TT_Task,DT_FixedDUR2,TK_NotStart,BL1-ST-GF-1040,FW for Slab,4433,460,0,64,0,8651,8651,64,32767.28,0,32767.28,,,,2014-09-30 12:00,2014-10-14 12:00,,2014-07-19 10:00,2014-08-03 16:00,2014-07-19 10:00,2014-08-03 16:00,2014-07-19 10:00,2014-08-03 16:00,2014-09-30 12:00,2014-10-14 12:00,,PT_Normal,,,,,zEYl6sM4MkuawmA4RefGDw,6zTvV7ysRQ6PlK8+JdMpew,,,N,0,0,,,2014-04-05 12:28,2014-04-05 13:21,admin,admin,
2594,142337,1749,35718,642,0,N,N,N,CP_Drtn,TT_Task,DT_FixedDUR2,TK_NotStart,BL1-ST-GF-1050,Reinforcement for Slab,4433,460,0,96,0,1034,1034,96,63523.56,0,63523.56,,,,2014-10-14 12:00,2014-10-29 12:00,,2014-08-04 08:00,2014-08-17 16:00,2014-08-04 08:00,2014-08-17 16:00,2014-08-04 08:00,2014-08-17 16:00,2014-10-14 12:00,2014-10-29 12:00,,PT_Normal,,,,,B3MvEzm9q0mVlWngWmDuVw,UikC+tevTkix6IHBMleKyg,,,N,0,0,,,2014-04-05 12:28,2014-04-05 13:21,admin,admin,
2595,142338,1749,35718,642,0,N,N,N,CP_Drtn,TT_Task,DT_FixedDUR2,TK_NotStart,BL1-ST-GF-1070,Concrete for Slab,4433,460,0,8,0,2277.716158,2277.716158,8,38235.31,0,38235.31,,,,2014-10-29 12:00,2014-10-30 12:00,,2014-08-18 08:00,2014-08-18 16:00,2014-08-18 08:00,2014-08-18 16:00,2014-08-18 08:00,2014-08-18 16:00,2014-10-29 12:00,2014-10-30 12:00,,PT_Normal,,,,,jL73BWDYFU+NF/o9ZFS9WA,t6BE1HvqR42wOGPUlaWrSA,,,N,0,0,,,2014-04-05 12:28,2014-04-05 13:21,admin,admin,
2596,142339,1749,35718,642,0,N,N,N,CP_Drtn,TT_Task,DT_FixedDUR2,TK_NotStart,BL1-ST-GF-1010,MEP Works in Vertical Element,,524,64,40,0,160,160,40,1803.546829,0,1803.546829,,,,2014-09-23 12:00,2014-09-29 12:00,,2014-06-25 08:00,2014-06-30 16:00,2014-06-25 08:00,2014-06-30 16:00,2014-06-25 08:00,2014-06-30 16:00,2014-09-23 12:00,2014-09-29 12:00,,PT_Normal,,,,,Ibd0qu8UYU+hglKA2dEtyQ,zKzvWafvQFymfWaPgU+DJA,,,N,0,0,,,2014-04-05 12:28,2014-04-05 13:21,admin,admin,
2597,142340,1749,35718,642,0,N,N,N,CP_Drtn,TT_Task,DT_FixedDUR2,TK_NotStart,BL1-ST-GF-1060,MEP Works in Slab & Beams,,460,0,40,0,320,320,40,3354.018234,0,3354.018234,,,,2014-10-22 12:00,2014-10-29 12:00,,2014-08-12 08:00,2014-08-17 16:00,2014-08-12 08:00,2014-08-17 16:00,2014-08-12 08:00,2014-08-17 16:00,2014-10-22 12:00,2014-10-29 12:00,,PT_Normal,,,,,w1eeEXeygEORvlRq6SWVOg,LTk5iq7nQaGE6jBK4C9+kA,,,N,0,0,,,2014-04-05 12:28,2014-04-05 13:21,admin,admin,
2598,142341,1749,35787,642,0,N,N,N,CP_Drtn,TT_Task,DT_FixedDUR2,TK_NotStart,BL1-FN-GF-1000,Block Works,4433,812,0,160,0,2418.26,2418.26,160,32170.216104,0,32170.216104,,,,2015-03-15 12:00,2015-04-07 12:00,,2014-11-15 08:00,2014-12-07 16:00,2014-11-15 08:00,2014-12-07 16:00,2014-11-15 08:00,2014-12-07 16:00,2015-03-15 12:00,2015-04-07 12:00,,PT_Normal,,,,,bbIMcWNAD0aFwYkgj0DPRw,A8T9kxdBT/iZBUN9WPbLlw,,,N,0,0,,,2014-04-05 12:28,2014-04-05 13:21,admin,admin,
2599,142342,1749,35787,642,0,N,N,N,CP_Drtn,TT_Task,DT_FixedDUR2,TK_NotStart,BL1-FN-GF-1010,Plaster,4433,812,0,120,0,2706,2706,120,31818.967341,0,31818.967341,,,,2015-04-21 12:00,2015-05-09 12:00,,2014-12-22 08:00,2015-01-10 16:00,2014-12-22 08:00,2015-01-10 16:00,2014-12-22 08:00,2015-01-10 16:00,2015-04-21 12:00,2015-05-09 12:00,,PT_Normal,,,,,8l3BLHBKiE2Cn67OvrS43w,pPv3MvCVQwmw5sMpT0aJSQ,,,N,0,0,,,2014-04-05 12:28,2014-04-05 13:21,admin,admin,
2600,142343,1749,35787,642,0,N,N,N,CP_Drtn,TT_Task,DT_FixedDUR2,TK_NotStart,BL1-FN-GF-1020,Paint 1st Coat,4433,812,0,120,0,271,271,120,4913.379049,0,4913.379049,,,,2015-05-09 12:00,2015-05-26 12:00,,2015-01-11 08:00,2015-01-27 16:00,2015-01-11 08:00,2015-01-27 16:00,2015-01-11 08:00,2015-01-27 16:00,2015-05-09 12:00,2015-05-26 12:00,,PT_Normal,,,,,aMg1VpPF9EeLbwGPVZl33A,OpK+V/SXS62ZdhnggsY23Q,,,N,0,0,,,2014-04-05 12:28,2014-04-05 13:21,admin,admin,
2601,142344,1749,35787,642,0,N,N,N,CP_Drtn,TT_Task,DT_FixedDUR2,TK_NotStart,BL1-FN-GF-1030,Ceiling Paint,4433,812,0,80,0,29.34,29.34,80,187.030801,0,187.030801,,,,2015-05-26 12:00,2015-06-06 12:00,,2015-01-28 08:00,2015-02-08 16:00,2015-01-28 08:00,2015-02-08 16:00,2015-01-28 08:00,2015-02-08 16:00,2015-05-26 12:00,2015-06-06 12:00,,PT_Normal,,,,,DR0ZcVMmA0qxX+EorCxFfA,afe0ramATiWqV2cgyjyvgw,,,N,0,0,,,2014-04-05 12:28,2014-04-05 13:21,admin,admin,
2602,142345,1749,35787,642,0,N,N,N,CP_Drtn,TT_Task,DT_FixedDUR2,TK_NotStart,BL1-FN-GF-1040,Waterproofing,4433,812,0,40,0,7,7,40,136.282792,0,136.282792,,,,2015-06-06 12:00,2015-06-11 12:00,,2015-02-09 08:00,2015-02-14 16:00,2015-02-09 08:00,2015-02-14 16:00,2015-02-09 08:00,2015-02-14 16:00,2015-06-06 12:00,2015-06-11 12:00,,PT_Normal,,,,,73CsakUIkUSHCsS5oTLOrg,7OulQTNsSJqGy0fdMZYvaQ,,,N,0,0,,,2014-04-05 12:28,2014-04-05 13:21,admin,admin,
2603,142346,1749,35787,642,0,N,N,N,CP_Drtn,TT_Task,DT_FixedDUR2,TK_NotStart,BL1-FN-GF-1060,Flooring Works,4433,812,0,160,0,1919,1919,160,44747.373906,0,44747.373906,,,,2015-06-11 12:00,2015-07-01 12:00,,2015-02-15 08:00,2015-03-09 16:00,2015-02-15 08:00,2015-03-09 16:00,2015-02-15 08:00,2015-03-09 16:00,2015-06-11 12:00,2015-07-01 12:00,,PT_Normal,,,,,3tnVQaebtUC+MmGy/+c+qQ,noEb0PbNSymuhe/O+jyNkA,,,N,0,0,,,2014-04-05 12:28,2014-04-05 13:21,admin,admin,
2604,142347,1749,35787,642,0,N,N,N,CP_Drtn,TT_Task,DT_FixedDUR2,TK_NotStart,BL1-FN-GF-1100,Final Paint,,484,0,80,0,0,0,80,10,0,10,,,,2015-09-01 12:00,2015-09-11 12:00,,2015-07-03 08:00,2015-07-12 16:00,2015-07-03 08:00,2015-07-12 16:00,2015-07-03 08:00,2015-07-12 16:00,2015-09-01 12:00,2015-09-11 12:00,,PT_Normal,,,,,Sg1pt2rknEaVXEyJCuaNJw,EWOn1BhAQgqRuDAKIZm/fg,,,N,0,0,,,2014-04-05 12:28,2014-04-05 13:21,admin,admin,
2605,142348,1749,35787,642,0,N,N,N,CP_Drtn,TT_Task,DT_FixedDUR2,TK_NotStart,BL1-FN-GF-1050,Wall Tiling,4433,884,72,152,0,1797,1797,152,7993.740834,0,7993.740834,,,,2015-06-15 12:00,2015-07-04 12:00,,2015-02-09 08:00,2015-03-02 16:00,2015-02-09 08:00,2015-03-02 16:00,2015-02-09 08:00,2015-03-02 16:00,2015-06-15 12:00,2015-07-04 12:00,,PT_Normal,,,,,/YwIHCRaCkCThiJUWWUe4g,7poVIi7zR22kctU5kbyLhg,,,N,0,0,,,2014-04-05 12:28,2014-04-05 13:21,admin,admin,
2606,142349,1749,35787,642,0,N,N,N,CP_Drtn,TT_Task,DT_FixedDUR2,TK_NotStart,BL1-FN-GF-1070,False Ceiling,4433,812,0,120,0,4420,4420,120,37102.27548,0,37102.27548,,,,2015-07-04 12:00,2015-07-19 12:00,,2015-03-14 08:00,2015-03-30 16:00,2015-03-14 08:00,2015-03-30 16:00,2015-03-14 08:00,2015-03-30 16:00,2015-07-04 12:00,2015-07-19 12:00,,PT_Normal,,,,,xSEQz3wMmE2B8TqP3nbhRQ,D9QsrHxXQRaV4XzKbDtcRQ,,,N,0,0,,,2014-04-05 12:28,2014-04-05 13:21,admin,admin,
2607,142350,1749,35787,642,0,N,N,N,CP_Drtn,TT_Task,DT_FixedDUR2,TK_NotStart,BL1-FN-GF-1080,Hand Rails for Stairs,4433,812,0,120,0,43,43,120,9498.792932,0,9498.792932,,,,2015-07-19 12:00,2015-08-03 12:00,,2015-03-31 08:00,2015-04-16 16:00,2015-03-31 08:00,2015-04-16 16:00,2015-03-31 08:00,2015-04-16 16:00,2015-07-19 12:00,2015-08-03 12:00,,PT_Normal,,,,,PnvSkaau5U+TtbRpTE04dg,eIxjO5P+SDu3By1n5HMd6Q,,,N,0,0,,,2014-04-05 12:28,2014-04-05 13:21,admin,admin,
2608,142351,1749,35787,642,0,N,N,N,CP_Drtn,TT_Task,DT_FixedDUR2,TK_NotStart,BL1-FN-GF-1090,Doors Installation/ Aluminum Doors,,740,0,120,0,0,0,120,37093.243296,0,37093.243296,,,,2015-08-03 12:00,2015-08-18 12:00,,2015-04-28 08:00,2015-05-14 16:00,2015-04-28 08:00,2015-05-14 16:00,2015-04-28 08:00,2015-05-14 16:00,2015-08-03 12:00,2015-08-18 12:00,,PT_Normal,,,,,jHI+/0Mm9EaE6K6+KoD6fw,KBNR0MasRB+XdBL80qdouQ,,,N,0,0,,,2014-04-05 12:28,2014-04-05 13:21,admin,admin,
2609,142352,1749,35791,642,0,N,N,N,CP_Drtn,TT_Task,DT_FixedDUR2,TK_NotStart,BL1-ST-1F-1000,Reinforcement for Verticals,4433,460,0,80,0,644.336623,644.336623,80,43089.301,0,43089.301,,,,2014-10-30 12:00,2014-11-13 12:00,,2014-08-19 08:00,2014-08-30 16:00,2014-08-19 08:00,2014-08-30 16:00,2014-08-19 08:00,2014-08-30 16:00,2014-10-30 12:00,2014-11-13 12:00,,PT_Normal,,,,,YY+h65/3mkO9pY1GtEQSCg,hDy9S5EuTG2L+9pVNVEuIg,,,N,0,0,,,2014-04-05 12:28,2014-04-05 13:21,admin,admin,
2610,142353,1749,35791,642,0,N,N,N,CP_Drtn,TT_Task,DT_FixedDUR2,TK_NotStart,BL1-ST-1F-1020,FW for Verticals,4433,460,0,48,0,9030.126485,9030.126485,48,39706.386,0,39706.386,,,,2014-11-13 12:00,2014-11-20 12:00,,2014-08-31 08:00,2014-09-06 16:00,2014-08-31 08:00,2014-09-06 16:00,2014-08-31 08:00,2014-09-06 16:00,2014-11-13 12:00,2014-11-20 12:00,,PT_Normal,,,,,KP5ieTLOS0mWRyI4eZMOpQ,ys1AAye0TO2SYiKLMzYwOw,,,N,0,0,,,2014-04-05 12:28,2014-04-05 13:21,admin,admin,
2611,142354,1749,35791,642,0,N,N,N,CP_Drtn,TT_Task,DT_FixedDUR2,TK_NotStart,BL1-ST-1F-1030,Concrete Verticals,4433,460,0,8,0,1743.234028,1743.234028,8,29263.36,0,29263.36,,,,2014-11-20 12:00,2014-11-22 12:00,,2014-09-07 08:00,2014-09-07 16:00,2014-09-07 08:00,2014-09-07 16:00,2014-09-07 08:00,2014-09-07 16:00,2014-11-20 12:00,2014-11-22 12:00,,PT_Normal,,,,,gdziN65mcU20ZMP6xrRD1g,mJadbiLcRdedCSFaC/VZww,,,N,0,0,,,2014-04-05 12:28,2014-04-05 13:21,admin,admin,
2612,142355,1749,35791,642,0,N,N,N,CP_Drtn,TT_Task,DT_FixedDUR2,TK_NotStart,BL1-ST-1F-1040,FW for Slab,4433,460,0,64,0,8974.170724,8974.170724,64,39462.38,0,39462.38,,,,2014-11-22 12:00,2014-12-01 12:00,,2014-09-08 08:00,2014-09-16 16:00,2014-09-08 08:00,2014-09-16 16:00,2014-09-08 08:00,2014-09-16 16:00,2014-11-22 12:00,2014-12-01 12:00,,PT_Normal,,,,,bNpl7O1HaEO4BhviPPC9Dw,Edjs67q6Q32W4DZE5mcnFA,,,N,0,0,,,2014-04-05 12:28,2014-04-05 13:21,admin,admin,
2613,142356,1749,35791,642,0,N,N,N,CP_Drtn,TT_Task,DT_FixedDUR2,TK_NotStart,BL1-ST-1F-1050,Reinforcement for Slab,4433,460,0,64,0,1189.256501,1189.256501,64,79519.76,0,79519.76,,,,2014-12-01 12:00,2014-12-10 12:00,,2014-09-17 08:00,2014-09-25 16:00,2014-09-17 08:00,2014-09-25 16:00,2014-09-17 08:00,2014-09-25 16:00,2014-12-01 12:00,2014-12-10 12:00,,PT_Normal,,,,,BFJWdnCAWkW7g3YwTWb47g,j955OERFRK2pUgRdwrFHkg,,,N,0,0,,,2014-04-05 12:28,2014-04-05 13:21,admin,admin,
2614,142357,1749,35791,642,0,N,N,N,CP_Drtn,TT_Task,DT_FixedDUR2,TK_NotStart,BL1-ST-1F-1070,Concrete for Slab,4433,460,0,8,0,2968.431526,2968.431526,8,49829.83,0,49829.83,,,,2014-12-10 12:00,2014-12-11 12:00,,2014-09-27 08:00,2014-09-27 16:00,2014-09-27 08:00,2014-09-27 16:00,2014-09-27 08:00,2014-09-27 16:00,2014-12-10 12:00,2014-12-11 12:00,,PT_Normal,,,,,LoANmwvFjkGk5z2DyK9vJg,oNPi5jEkS2KnwgbvocZPjw,,,N,0,0,,,2014-04-05 12:28,2014-04-05 13:21,admin,admin,
2615,142358,1749,35791,642,0,N,N,N,CP_Drtn,TT_Task,DT_FixedDUR2,TK_NotStart,BL1-ST-1F-1010,MEP Works in Vertical Element,,508,48,40,0,160,160,40,1803.546829,0,1803.546829,,,,2014-11-15 12:00,2014-11-20 12:00,,2014-08-25 08:00,2014-08-30 16:00,2014-08-25 08:00,2014-08-30 16:00,2014-08-25 08:00,2014-08-30 16:00,2014-11-15 12:00,2014-11-20 12:00,,PT_Normal,,,,,wTOx/yHDEk68chnLV2d1Gg,hTvL0vpTT8eyCU6h0V0q1A,,,N,0,0,,,2014-04-05 12:28,2014-04-05 13:21,admin,admin,
2616,142359,1749,35791,642,0,N,N,N,CP_Drtn,TT_Task,DT_FixedDUR2,TK_NotStart,BL1-ST-1F-1060,MEP Works in Slab & Beams,,460,0,40,0,320,320,40,3354.018234,0,3354.018234,,,,2014-12-04 12:00,2014-12-10 12:00,,2014-09-21 08:00,2014-09-25 16:00,2014-09-21 08:00,2014-09-25 16:00,2014-09-21 08:00,2014-09-25 16:00,2014-12-04 12:00,2014-12-10 12:00,,PT_Normal,,,,,UF/9PXuPDEqeOw9lQZTLfQ,71s8iqzRTEmKr7Yn2NfZ+g,,,N,0,0,,,2014-04-05 12:28,2014-04-05 13:21,admin,admin,
2617,142360,1749,35876,642,0,N,N,N,CP_Drtn,TT_Task,DT_FixedDUR2,TK_NotStart,BL1-FN-1F-1000,Block Works,4433,1088,0,160,0,1988,1988,160,26454.943775,0,26454.943775,,,,2015-05-23 08:00,2015-06-12 16:00,,2014-12-13 08:00,2015-01-06 16:00,2014-12-13 08:00,2015-01-06 16:00,2014-12-13 08:00,2015-01-06 16:00,2015-05-23 08:00,2015-06-12 16:00,,PT_Normal,,,,,KdVBfh5gRUituBUe8wblKg,J5B4N+K6TaWZYTUORQcisw,,,N,0,0,,,2014-04-05 12:28,2014-04-05 13:21,admin,admin,
2618,142361,1749,35876,642,0,N,N,N,CP_Drtn,TT_Task,DT_FixedDUR2,TK_NotStart,BL1-FN-1F-1010,Plaster,4433,1088,0,120,0,2245.5,2245.5,120,26407.040902,0,26407.040902,,,,2015-06-25 08:00,2015-07-09 16:00,,2015-01-21 08:00,2015-02-07 16:00,2015-01-21 08:00,2015-02-07 16:00,2015-01-21 08:00,2015-02-07 16:00,2015-06-25 08:00,2015-07-09 16:00,,PT_Normal,,,,,+yJVHqYYy0mMjjj6IZPd1g,5xy0SGqoTcWst1UJT7urQQ,,,N,0,0,,,2014-04-05 12:28,2014-04-05 13:21,admin,admin,
2619,142362,1749,35876,642,0,N,N,N,CP_Drtn,TT_Task,DT_FixedDUR2,TK_NotStart,BL1-FN-1F-1020,Paint 1st Coat,4433,1160,0,120,0,674,674,120,4079.482684,0,4079.482684,,,,2015-07-19 08:00,2015-08-02 16:00,,2015-02-08 08:00,2015-02-24 16:00,2015-02-08 08:00,2015-02-24 16:00,2015-02-08 08:00,2015-02-24 16:00,2015-07-19 08:00,2015-08-02 16:00,,PT_Normal,,,,,d9998k0gxkGNncJiXCbTAg,28xJZRrFTIO34isxWTRwLA,,,N,0,0,,,2014-04-05 12:28,2014-04-05 13:21,admin,admin,
2620,142363,1749,35876,642,0,N,N,N,CP_Drtn,TT_Task,DT_FixedDUR2,TK_NotStart,BL1-FN-1F-1030,Ceiling Paint,4433,1160,0,80,0,26.6,26.6,80,170.321261,0,170.321261,,,,2015-07-29 08:00,2015-08-07 16:00,,2015-02-19 08:00,2015-03-02 16:00,2015-02-19 08:00,2015-03-02 16:00,2015-02-19 08:00,2015-03-02 16:00,2015-07-29 08:00,2015-08-07 16:00,,PT_Normal,,,,,BH4ClTxShkahDPChmRc8Pg,hv92pnTMQjmhQ0GQfansvw,,,N,0,0,,,2014-04-05 12:28,2014-04-05 13:21,admin,admin,
2621,142364,1749,35876,642,0,N,N,N,CP_Drtn,TT_Task,DT_FixedDUR2,TK_NotStart,BL1-FN-1F-1040,Waterproofing,4433,1160,0,40,0,6.9,6.9,40,136.19247,0,136.19247,,,,2015-08-08 08:00,2015-08-12 16:00,,2015-03-03 08:00,2015-03-08 16:00,2015-03-03 08:00,2015-03-08 16:00,2015-03-03 08:00,2015-03-08 16:00,2015-08-08 08:00,2015-08-12 16:00,,PT_Normal,,,,,DS7yy0IUsUWj9R2rQwo9iw,bcnZdPZwQYe3mvmqQMPzwA,,,N,0,0,,,2014-04-05 12:28,2014-04-05 13:21,admin,admin,
2622,142365,1749,35876,642,0,N,N,N,CP_Drtn,TT_Task,DT_FixedDUR2,TK_NotStart,BL1-FN-1F-1060,Flooring Works,4433,1160,0,160,0,1346,1346,160,31393.064434,0,31393.064434,,,,2015-08-13 08:00,2015-09-01 16:00,,2015-03-09 08:00,2015-03-31 16:00,2015-03-09 08:00,2015-03-31 16:00,2015-03-09 08:00,2015-03-31 16:00,2015-08-13 08:00,2015-09-01 16:00,,PT_Normal,,,,,wgMeln7SnEqjXf6rG23UAg,P+Mta+VlQiqrx+FD9V7fjA,,,N,0,0,,,2014-04-05 12:28,2014-04-05 13:21,admin,admin,
2623,142366,1749,35876,642,0,N,N,N,CP_Drtn,TT_Task,DT_FixedDUR2,TK_NotStart,BL1-FN-1F-1100,Final Paint,,1832,120,80,0,0,0,80,10,0,10,,,,2016-02-04 08:00,2016-02-13 16:00,,2015-06-20 08:00,2015-06-29 16:00,2015-06-20 08:00,2015-06-29 16:00,2015-06-20 08:00,2015-06-29 16:00,2016-02-04 08:00,2016-02-13 16:00,,PT_Normal,,,,,+z0mknfyZE2Lrd1ZFHWXyw,wuPoEa3TQmeyt1n8XE7s5Q,,,N,0,0,,,2014-04-05 12:28,2014-04-05 13:21,admin,admin,
2624,142367,1749,35876,642,0,N,N,N,CP_Drtn,TT_Task,DT_FixedDUR2,TK_NotStart,BL1-FN-1F-1050,Wall Tiling,4433,1304,144,80,0,1184,1184,80,5264.472894,0,5264.472894,,,,2015-08-26 08:00,2015-09-04 16:00,,2015-03-03 08:00,2015-03-14 16:00,2015-03-03 08:00,2015-03-14 16:00,2015-03-03 08:00,2015-03-14 16:00,2015-08-26 08:00,2015-09-04 16:00,,PT_Normal,,,,,bGrYZqooLEi1qgSKl7EzVg,iwCaikKRQPmgawBBV8GPeQ,,,N,0,0,,,2014-04-05 12:28,2014-04-05 13:21,admin,admin,
2625,142368,1749,35876,642,0,N,N,N,CP_Drtn,TT_Task,DT_FixedDUR2,TK_NotStart,BL1-FN-1F-1070,False Ceiling,4433,1160,0,120,0,4655,4655,120,39074.565704,0,39074.565704,,,,2015-09-05 08:00,2015-09-19 16:00,,2015-04-05 08:00,2015-04-21 16:00,2015-04-05 08:00,2015-04-21 16:00,2015-04-05 08:00,2015-04-21 16:00,2015-09-05 08:00,2015-09-19 16:00,,PT_Normal,,,,,dhnrgd38UkWzSC3MKyTr8A,ctHdFi3yRWaMW/xp+OUFzw,,,N,0,0,,,2014-04-05 12:28,2014-04-05 13:21,admin,admin,
2626,142369,1749,35876,642,0,N,N,N,CP_Drtn,TT_Task,DT_FixedDUR2,TK_NotStart,BL1-FN-1F-1080,Hand Rails for Stairs,4433,1160,40,120,0,43,43,120,9498.792932,0,9498.792932,,,,2015-09-20 08:00,2015-10-04 16:00,,2015-04-22 08:00,2015-05-09 16:00,2015-04-22 08:00,2015-05-09 16:00,2015-04-22 08:00,2015-05-09 16:00,2015-09-20 08:00,2015-10-04 16:00,,PT_Normal,,,,,HKu3jWzirEu2jXNjQ+3f+A,W1Zc/UC9QQKZv6W/fL+uSg,,,N,0,0,,,2014-04-05 12:28,2014-04-05 13:21,admin,admin,
2627,142370,1749,35876,642,0,N,N,N,CP_Drtn,TT_Task,DT_FixedDUR2,TK_NotStart,BL1-FN-1F-1090,Doors Installation,,1120,0,120,0,0,0,120,31780.061209,0,31780.061209,,,,2015-10-05 08:00,2015-10-19 16:00,,2015-05-16 08:00,2015-06-01 16:00,2015-05-16 08:00,2015-06-01 16:00,2015-05-16 08:00,2015-06-01 16:00,2015-10-05 08:00,2015-10-19 16:00,,PT_Normal,,,,,56SELwP18kuzzAGnqyNefA,xVJTjRx7RQ+fuJI/GGib7A,,,N,0,0,,,2014-04-05 12:28,2014-04-05 13:21,admin,admin,
2628,142371,1749,35784,642,0,N,N,N,CP_Drtn,TT_Task,DT_FixedDUR2,TK_NotStart,BL1-ST-2F-1000,Reinforcement for Verticals,4433,460,0,80,0,644.336623,644.336623,80,43089.301,0,43089.301,,,,2014-12-11 12:00,2014-12-23 12:00,,2014-09-28 08:00,2014-10-13 16:00,2014-09-28 08:00,2014-10-13 16:00,2014-09-28 08:00,2014-10-13 16:00,2014-12-11 12:00,2014-12-23 12:00,,PT_Normal,,,,,bc9eYsbJI0iutlgEf6N/7w,lvibr+0qSgyMklBDZx1xCg,,,N,0,0,,,2014-04-05 12:28,2014-04-05 13:21,admin,admin,
2629,142372,1749,35784,642,0,N,N,N,CP_Drtn,TT_Task,DT_FixedDUR2,TK_NotStart,BL1-ST-2F-1020,FW for Verticals,4433,460,0,48,0,8393.364094,8393.364094,48,36906.9,0,36906.9,,,,2014-12-23 12:00,2014-12-30 12:00,,2014-10-14 08:00,2014-10-20 16:00,2014-10-14 08:00,2014-10-20 16:00,2014-10-14 08:00,2014-10-20 16:00,2014-12-23 12:00,2014-12-30 12:00,,PT_Normal,,,,,Q0ZZjqX1ZEyDXMYT+2Wywg,C56Z6dPpSNiPd+YcZ7sZfg,,,N,0,0,,,2014-04-05 12:28,2014-04-05 13:21,admin,admin,
2630,142373,1749,35784,642,0,N,N,N,CP_Drtn,TT_Task,DT_FixedDUR2,TK_NotStart,BL1-ST-2F-1030,Concrete Verticals,4433,460,0,8,0,1619.891997,1619.891997,8,27192.91,0,27192.91,,,,2014-12-30 12:00,2014-12-31 12:00,,2014-10-21 08:00,2014-10-21 16:00,2014-10-21 08:00,2014-10-21 16:00,2014-10-21 08:00,2014-10-21 16:00,2014-12-30 12:00,2014-12-31 12:00,,PT_Normal,,,,,gR/NtfSt9kasT3mz077U4w,nET1XfZPRF6Tfj+FlUZ3Sw,,,N,0,0,,,2014-04-05 12:28,2014-04-05 13:21,admin,admin,
2631,142374,1749,35784,642,0,N,N,N,CP_Drtn,TT_Task,DT_FixedDUR2,TK_NotStart,BL1-ST-2F-1040,FW for Slab,4433,460,0,64,0,9845.380668,9845.380668,64,43292.6,0,43292.6,,,,2014-12-31 12:00,2015-01-12 12:00,,2014-10-22 08:00,2014-11-02 16:00,2014-10-22 08:00,2014-11-02 16:00,2014-10-22 08:00,2014-11-02 16:00,2014-12-31 12:00,2015-01-12 12:00,,PT_Normal,,,,,AmUKRrMpKkCewz+gLNkhWw,/NJZ6PJyRji7BLE9fdSYNA,,,N,0,0,,,2014-04-05 12:28,2014-04-05 13:21,admin,admin,
2632,142375,1749,35784,642,0,N,N,N,CP_Drtn,TT_Task,DT_FixedDUR2,TK_NotStart,BL1-ST-2F-1050,Reinforcement for Slab,4433,460,0,64,0,1189.256501,1189.256501,64,79519.76,0,79519.76,,,,2015-01-12 12:00,2015-01-21 12:00,,2014-11-04 08:00,2014-11-12 16:00,2014-11-04 08:00,2014-11-12 16:00,2014-11-04 08:00,2014-11-12 16:00,2015-01-12 12:00,2015-01-21 12:00,,PT_Normal,,,,,Am1eWvwu3Ua517/oTWmLYg,SDRTM5ebSEmbAkhBaucRyQ,,,N,0,0,,,2014-04-05 12:28,2014-04-05 13:21,admin,admin,
2633,142376,1749,35784,642,0,N,N,N,CP_Drtn,TT_Task,DT_FixedDUR2,TK_NotStart,BL1-ST-2F-1070,Concrete for Slab,4433,460,0,8,0,3157.555973,3157.555973,8,53004.52,0,53004.52,,,,2015-01-21 12:00,2015-01-22 12:00,,2014-11-13 08:00,2014-11-13 16:00,2014-11-13 08:00,2014-11-13 16:00,2014-11-13 08:00,2014-11-13 16:00,2015-01-21 12:00,2015-01-22 12:00,,PT_Normal,,,,,hKBXMbz2HUiIWoJ8zIS3bw,YBq9heTaQVqokn2Bm/G98g,,,N,0,0,,,2014-04-05 12:28,2014-04-05 13:21,admin,admin,
2634,142377,1749,35784,642,0,N,N,N,CP_Drtn,TT_Task,DT_FixedDUR2,TK_NotStart,BL1-ST-2F-1010,MEP Works in Vertical Element,,508,48,40,0,160,160,40,1803.546829,0,1803.546829,,,,2014-12-24 12:00,2014-12-30 12:00,,2014-10-04 10:00,2014-10-13 16:00,2014-10-04 10:00,2014-10-13 16:00,2014-10-04 10:00,2014-10-13 16:00,2014-12-24 12:00,2014-12-30 12:00,,PT_Normal,,,,,rEXvFomt5keWOx8GvJnzDA,u6HHhOGFTbSvl7O6XQQAeA,,,N,0,0,,,2014-04-05 12:28,2014-04-05 13:21,admin,admin,
2635,142378,1749,35784,642,0,N,N,N,CP_Drtn,TT_Task,DT_FixedDUR2,TK_NotStart,BL1-ST-2F-1060,MEP Works in Slab & Beams,,460,0,40,0,320,320,40,3354.018234,0,3354.018234,,,,2015-01-15 12:00,2015-01-21 12:00,,2014-11-08 08:00,2014-11-12 16:00,2014-11-08 08:00,2014-11-12 16:00,2014-11-08 08:00,2014-11-12 16:00,2015-01-15 12:00,2015-01-21 12:00,,PT_Normal,,,,,ql3wR+cedECG/Kf/JfV55Q,+CpcFP9xTsqPesIiczR6ew,,,N,0,0,,,2014-04-05 12:28,2014-04-05 13:21,admin,admin,
2636,142379,1749,35733,642,0,N,N,N,CP_Drtn,TT_Task,DT_FixedDUR2,TK_NotStart,BL1-FN-2F-1000,Block Works,4433,1040,0,160,0,1988,1988,160,26454.943775,0,26454.943775,,,,2015-06-11 08:00,2015-06-30 16:00,,2015-01-12 08:00,2015-02-03 16:00,2015-01-12 08:00,2015-02-03 16:00,2015-01-12 08:00,2015-02-03 16:00,2015-06-11 08:00,2015-06-30 16:00,,PT_Normal,,,,,cL9/MiqZtE2nZjVStCVSrQ,/KZskZPRQjyTihJt6hET3A,,,N,0,0,,,2014-04-05 12:28,2014-04-05 13:21,admin,admin,
2637,142380,1749,35733,642,0,N,N,N,CP_Drtn,TT_Task,DT_FixedDUR2,TK_NotStart,BL1-FN-2F-1010,Plaster,4433,1040,0,144,0,2245.5,2245.5,144,26410.040902,0,26410.040902,,,,2015-07-13 08:00,2015-07-30 16:00,,2015-02-18 08:00,2015-03-10 16:00,2015-02-18 08:00,2015-03-10 16:00,2015-02-18 08:00,2015-03-10 16:00,2015-07-13 08:00,2015-07-30 16:00,,PT_Normal,,,,,HseapfLLk06T7nawBdgUng,DfrMtdS3R8C+y6AuVONrmw,,,N,0,0,,,2014-04-05 12:28,2014-04-05 13:21,admin,admin,
2638,142381,1749,35733,642,0,N,N,N,CP_Drtn,TT_Task,DT_FixedDUR2,TK_NotStart,BL1-FN-2F-1020,Paint 1st Coat,4433,1064,0,120,0,674,674,120,4079.482684,0,4079.482684,,,,2015-08-03 08:00,2015-08-17 16:00,,2015-03-11 08:00,2015-03-28 16:00,2015-03-11 08:00,2015-03-28 16:00,2015-03-11 08:00,2015-03-28 16:00,2015-08-03 08:00,2015-08-17 16:00,,PT_Normal,,,,,upJPIH3YLE2TLryAyU3+ZQ,UQpxJposRfOyh2j94Fz+QQ,,,N,0,0,,,2014-04-05 12:28,2014-04-05 13:21,admin,admin,
2639,142382,1749,35733,642,0,N,N,N,CP_Drtn,TT_Task,DT_FixedDUR2,TK_NotStart,BL1-FN-2F-1030,Ceiling Paint,4433,1064,0,80,0,26.6,26.6,80,170.321261,0,170.321261,,,,2015-08-13 08:00,2015-08-22 16:00,,2015-03-23 08:00,2015-04-02 16:00,2015-03-23 08:00,2015-04-02 16:00,2015-03-23 08:00,2015-04-02 16:00,2015-08-13 08:00,2015-08-22 16:00,,PT_Normal,,,,,yzJ7oUlgEUe04YOvwdQvIQ,sXSaeljHSou/LovPsfsW5g,,,N,0,0,,,2014-04-05 12:28,2014-04-05 13:21,admin,admin,
2640,142383,1749,35733,642,0,N,N,N,CP_Drtn,TT_Task,DT_FixedDUR2,TK_NotStart,BL1-FN-2F-1040,Waterproofing,4433,1064,0,40,0,6.9,6.9,40,136.19247,0,136.19247,,,,2015-08-23 08:00,2015-08-27 16:00,,2015-04-04 08:00,2015-04-08 16:00,2015-04-04 08:00,2015-04-08 16:00,2015-04-04 08:00,2015-04-08 16:00,2015-08-23 08:00,2015-08-27 16:00,,PT_Normal,,,,,wptU1uozrkmwsrH7/XdBAw,B0repk5hQ0qqHE+RTmtqlg,,,N,0,0,,,2014-04-05 12:28,2014-04-05 13:21,admin,admin,
2641,142384,1749,35733,642,0,N,N,N,CP_Drtn,TT_Task,DT_FixedDUR2,TK_NotStart,BL1-FN-2F-1060,Flooring Works,4433,1064,0,160,0,1346,1346,160,31393.064434,0,31393.064434,,,,2015-08-28 08:00,2015-09-16 16:00,,2015-04-09 08:00,2015-05-02 16:00,2015-04-09 08:00,2015-05-02 16:00,2015-04-09 08:00,2015-05-02 16:00,2015-08-28 08:00,2015-09-16 16:00,,PT_Normal,,,,,V9zLcxvrhUOaZGiBSnpEPA,R0QF2OnmSVWdCTOror0IVg,,,N,0,0,,,2014-04-05 12:28,2014-04-05 13:21,admin,admin,
2642,142385,1749,35733,642,0,N,N,N,CP_Drtn,TT_Task,DT_FixedDUR2,TK_NotStart,BL1-FN-2F-1100,Final Paint,,1648,0,80,0,0,0,80,10,0,10,,,,2016-02-06 08:00,2016-02-15 16:00,,2015-07-15 08:00,2015-07-24 16:00,2015-07-15 08:00,2015-07-24 16:00,2015-07-15 08:00,2015-07-24 16:00,2016-02-06 08:00,2016-02-15 16:00,,PT_Normal,,,,,2fClUiTidEimXGRfWO86aw,PSocyLr/SxWdBq9eivJMhQ,,,N,0,0,,,2014-04-05 12:28,2014-04-05 13:21,admin,admin,
2643,142386,1749,35733,642,0,N,N,N,CP_Drtn,TT_Task,DT_FixedDUR2,TK_NotStart,BL1-FN-2F-1050,Wall Tiling,4433,1208,144,80,0,2368,2368,80,10519,0,10519,,,,2015-09-10 08:00,2015-09-19 16:00,,2015-04-04 08:00,2015-04-14 16:00,2015-04-04 08:00,2015-04-14 16:00,2015-04-04 08:00,2015-04-14 16:00,2015-09-10 08:00,2015-09-19 16:00,,PT_Normal,,,,,HhaI3H7WqUmx8txUu4FEvg,inKFPyduTQOjA1i4ozxxYQ,,,N,0,0,,,2014-04-05 12:28,2014-04-05 13:21,admin,admin,
2644,142387,1749,35733,642,0,N,N,N,CP_Drtn,TT_Task,DT_FixedDUR2,TK_NotStart,BL1-FN-2F-1070,False Ceiling,4433,1064,0,120,0,4655,4655,120,39074.565704,0,39074.565704,,,,2015-09-20 08:00,2015-10-04 16:00,,2015-05-06 08:00,2015-05-23 16:00,2015-05-06 08:00,2015-05-23 16:00,2015-05-06 08:00,2015-05-23 16:00,2015-09-20 08:00,2015-10-04 16:00,,PT_Normal,,,,,ZbKGl7ytP0ab9Kp0Tsl+8A,e2G2+fWNTKqbQ+sfzYD2NA,,,N,0,0,,,2014-04-05 12:28,2014-04-05 13:21,admin,admin,
2645,142388,1749,35733,642,0,N,N,N,CP_Drtn,TT_Task,DT_FixedDUR2,TK_NotStart,BL1-FN-2F-1080,Hand Rails for Stairs,4433,1064,0,120,0,43,43,120,9498.792932,0,9498.792932,,,,2015-10-05 08:00,2015-10-19 16:00,,2015-05-24 08:00,2015-06-08 16:00,2015-05-24 08:00,2015-06-08 16:00,2015-05-24 08:00,2015-06-08 16:00,2015-10-05 08:00,2015-10-19 16:00,,PT_Normal,,,,,ud6MOIJnLkK0W5VLf8S2lg,s5/ZYZUcTSmMv433sB34BA,,,N,0,0,,,2014-04-05 12:28,2014-04-05 13:21,admin,admin,
2646,142389,1749,35733,642,0,N,N,N,CP_Drtn,TT_Task,DT_FixedDUR2,TK_NotStart,BL1-FN-2F-1090,Doors Installation,,1064,0,120,0,0,0,120,31780.061209,0,31780.061209,,,,2015-10-20 08:00,2015-11-03 16:00,,2015-06-09 08:00,2015-06-23 16:00,2015-06-09 08:00,2015-06-23 16:00,2015-06-09 08:00,2015-06-23 16:00,2015-10-20 08:00,2015-11-03 16:00,,PT_Normal,,,,,f4uUiIJo40yTsJRMPfRVIg,iIfD5K8ZR+68/9SLVZevkw,,,N,0,0,,,2014-04-05 12:28,2014-04-05 13:21,admin,admin,
2647,142390,1749,35877,642,0,N,N,N,CP_Drtn,TT_Task,DT_FixedDUR2,TK_NotStart,BL1-ST-3F-1000,Reinforcement for Verticals,4433,460,0,64,0,644.336623,644.336623,64,43087.301,0,43087.301,,,,2015-01-22 12:00,2015-02-01 12:00,,2014-11-15 08:00,2014-11-23 16:00,2014-11-15 08:00,2014-11-23 16:00,2014-11-15 08:00,2014-11-23 16:00,2015-01-22 12:00,2015-02-01 12:00,,PT_Normal,,,,,fgQrW31Dakyl5ZU25llrDQ,bvmOe7cZSu+6XO+iijw0NA,,,N,0,0,,,2014-04-05 12:28,2014-04-05 13:21,admin,admin,
2648,142391,1749,35877,642,0,N,N,N,CP_Drtn,TT_Task,DT_FixedDUR2,TK_NotStart,BL1-ST-3F-1020,FW for Verticals,4433,460,0,32,0,7977.591544,7977.591544,32,35076.982,0,35076.982,,,,2015-02-01 12:00,2015-02-05 12:00,,2014-11-24 08:00,2014-11-27 16:00,2014-11-24 08:00,2014-11-27 16:00,2014-11-24 08:00,2014-11-27 16:00,2015-02-01 12:00,2015-02-05 12:00,,PT_Normal,,,,,MqFV79YfQUWrvb/nKQBCWQ,oH/6iWUxRmGNmQ2pkmsWIg,,,N,0,0,,,2014-04-05 12:28,2014-04-05 13:21,admin,admin,
2649,142392,1749,35877,642,0,N,N,N,CP_Drtn,TT_Task,DT_FixedDUR2,TK_NotStart,BL1-ST-3F-1030,Concrete Verticals,4433,460,0,8,0,1383.897579,1383.897579,8,23231.449,0,23231.449,,,,2015-02-05 12:00,2015-02-07 12:00,,2014-11-29 08:00,2014-11-29 16:00,2014-11-29 08:00,2014-11-29 16:00,2014-11-29 08:00,2014-11-29 16:00,2015-02-05 12:00,2015-02-07 12:00,,PT_Normal,,,,,SF0ARrERuUGjj21mmoFSVw,paDcw4lvQHCRE+9xKtVvaw,,,N,0,0,,,2014-04-05 12:28,2014-04-05 13:21,admin,admin,
2650,142393,1749,35877,642,0,N,N,N,CP_Drtn,TT_Task,DT_FixedDUR2,TK_NotStart,BL1-ST-3F-1040,FW for Slab,4433,460,0,40,0,11871.120864,11871.120864,40,52195.64,0,52195.64,,,,2015-02-07 12:00,2015-02-12 12:00,,2014-11-30 08:00,2014-12-04 16:00,2014-11-30 08:00,2014-12-04 16:00,2014-11-30 08:00,2014-12-04 16:00,2015-02-07 12:00,2015-02-12 12:00,,PT_Normal,,,,,B1grzcjRvUOABCpQRKMV5g,q38bSyOiRxqnPimR0Yl3Sg,,,N,0,0,,,2014-04-05 12:28,2014-04-05 13:21,admin,admin,
2651,142394,1749,35877,642,0,N,N,N,CP_Drtn,TT_Task,DT_FixedDUR2,TK_NotStart,BL1-ST-3F-1050,Reinforcement for Slab,4433,460,0,40,0,1189.256501,1189.256501,40,79516.76,0,79516.76,,,,2015-02-12 12:00,2015-02-18 12:00,,2014-12-06 08:00,2014-12-10 16:00,2014-12-06 08:00,2014-12-10 16:00,2014-12-06 08:00,2014-12-10 16:00,2015-02-12 12:00,2015-02-18 12:00,,PT_Normal,,,,,XR8vR/j1V0S0uVdCbtFphA,xuBEKRVPQMu5TIiSSuc3vg,,,N,0,0,,,2014-04-05 12:28,2014-04-05 13:21,admin,admin,
2652,142395,1749,35877,642,0,N,N,N,CP_Drtn,TT_Task,DT_FixedDUR2,TK_NotStart,BL1-ST-3F-1070,Concrete for Slab,4433,460,0,8,0,3063.816029,3063.816029,8,51430.978,0,51430.978,,,,2015-02-18 12:00,2015-02-19 12:00,,2014-12-11 08:00,2014-12-11 16:00,2014-12-11 08:00,2014-12-11 16:00,2014-12-11 08:00,2014-12-11 16:00,2015-02-18 12:00,2015-02-19 12:00,,PT_Normal,,,,,WOeApQiut0eqRYVbTV4bvA,0Ba1eogGRZ2tw7XNE0W1og,,,N,0,0,,,2014-04-05 12:28,2014-04-05 13:21,admin,admin,
2653,142396,1749,35877,642,0,N,N,N,CP_Drtn,TT_Task,DT_FixedDUR2,TK_NotStart,BL1-ST-3F-1010,MEP Works in Vertical Element,,492,32,40,0,160,160,40,1803.546829,0,1803.546829,,,,2015-01-31 12:00,2015-02-05 12:00,,2014-11-18 08:00,2014-11-23 16:00,2014-11-18 08:00,2014-11-23 16:00,2014-11-18 08:00,2014-11-23 16:00,2015-01-31 12:00,2015-02-05 12:00,,PT_Normal,,,,,lZywF/RbvUKq0OhCxXx1Sg,+1nhxeduRB+coiH2jUu5Eg,,,N,0,0,,,2014-04-05 12:28,2014-04-05 13:21,admin,admin,
2654,142397,1749,35877,642,0,N,N,N,CP_Drtn,TT_Task,DT_FixedDUR2,TK_NotStart,BL1-ST-3F-1060,MEP Works in Slab & Beams,,460,0,40,0,320,320,40,3354.018234,0,3354.018234,,,,2015-02-12 12:00,2015-02-18 12:00,,2014-12-06 08:00,2014-12-10 16:00,2014-12-06 08:00,2014-12-10 16:00,2014-12-06 08:00,2014-12-10 16:00,2015-02-12 12:00,2015-02-18 12:00,,PT_Normal,,,,,ZdjkeEC0GkmldaDrpWwmUg,TWWdPfW+Tuap5I7KxUdBZA,,,N,0,0,,,2014-04-05 12:28,2014-04-05 13:21,admin,admin,
2655,142398,1749,35886,642,0,N,N,N,CP_Drtn,TT_Task,DT_FixedDUR2,TK_NotStart,BL1-FN-3F-1000,Block Works,4433,944,0,160,0,1988,1988,160,26454.943775,0,26454.943775,,,,2015-06-23 08:00,2015-07-12 16:00,,2015-02-09 08:00,2015-03-03 16:00,2015-02-09 08:00,2015-03-03 16:00,2015-02-09 08:00,2015-03-03 16:00,2015-06-23 08:00,2015-07-12 16:00,,PT_Normal,,,,,vJEuIx8Me0mGPMxQDwc//g,Np2O5kMTTRum+begTO3TZQ,,,N,0,0,,,2014-04-05 12:28,2014-04-05 13:21,admin,admin,
2656,142399,1749,35886,642,0,N,N,N,CP_Drtn,TT_Task,DT_FixedDUR2,TK_NotStart,BL1-FN-3F-1010,Plaster,4433,992,0,144,0,2245.5,2245.5,144,26410.040902,0,26410.040902,,,,2015-07-31 08:00,2015-08-17 16:00,,2015-03-18 08:00,2015-04-07 16:00,2015-03-18 08:00,2015-04-07 16:00,2015-03-18 08:00,2015-04-07 16:00,2015-07-31 08:00,2015-08-17 16:00,,PT_Normal,,,,,Be7zErDd3kaWEwmOrkJL/Q,OgXxC8JERJCx1oMYl9NLew,,,N,0,0,,,2014-04-05 12:28,2014-04-05 13:21,admin,admin,
2657,142400,1749,35886,642,0,N,N,N,CP_Drtn,TT_Task,DT_FixedDUR2,TK_NotStart,BL1-FN-3F-1020,Paint 1st Coat,4433,992,0,120,0,674,674,120,4079.482684,0,4079.482684,,,,2015-08-18 08:00,2015-09-01 16:00,,2015-04-08 08:00,2015-04-25 16:00,2015-04-08 08:00,2015-04-25 16:00,2015-04-08 08:00,2015-04-25 16:00,2015-08-18 08:00,2015-09-01 16:00,,PT_Normal,,,,,5BxeTY3ScE2bjvF1uiGZ3Q,ysOTss0RSb+1DwcgfJ/+hA,,,N,0,0,,,2014-04-05 12:28,2014-04-05 13:21,admin,admin,
2658,142401,1749,35886,642,0,N,N,N,CP_Drtn,TT_Task,DT_FixedDUR2,TK_NotStart,BL1-FN-3F-1030,Ceiling Paint,4433,992,0,80,0,26.6,26.6,80,170.321261,0,170.321261,,,,2015-08-28 08:00,2015-09-06 16:00,,2015-04-20 08:00,2015-04-30 16:00,2015-04-20 08:00,2015-04-30 16:00,2015-04-20 08:00,2015-04-30 16:00,2015-08-28 08:00,2015-09-06 16:00,,PT_Normal,,,,,8qwwT/M4YUCFScVXG8d3zg,H3ugC4vtR5+Q//F3r4H03Q,,,N,0,0,,,2014-04-05 12:28,2014-04-05 13:21,admin,admin,
2659,142402,1749,35886,642,0,N,N,N,CP_Drtn,TT_Task,DT_FixedDUR2,TK_NotStart,BL1-FN-3F-1040,Waterproofing,4433,992,0,40,0,6.9,6.9,40,136.19247,0,136.19247,,,,2015-09-07 08:00,2015-09-11 16:00,,2015-05-02 08:00,2015-05-06 16:00,2015-05-02 08:00,2015-05-06 16:00,2015-05-02 08:00,2015-05-06 16:00,2015-09-07 08:00,2015-09-11 16:00,,PT_Normal,,,,,Hb4sPaW+EESxtxDRqVOz2g,RKmDwhC7T0yqqtm/wfdHTw,,,N,0,0,,,2014-04-05 12:28,2014-04-05 13:21,admin,admin,
2660,142403,1749,35886,642,0,N,N,N,CP_Drtn,TT_Task,DT_FixedDUR2,TK_NotStart,BL1-FN-3F-1060,Flooring Works,4433,992,0,160,0,1346,1346,160,31393.064434,0,31393.064434,,,,2015-09-12 08:00,2015-10-01 16:00,,2015-05-07 08:00,2015-05-30 16:00,2015-05-07 08:00,2015-05-30 16:00,2015-05-07 08:00,2015-05-30 16:00,2015-09-12 08:00,2015-10-01 16:00,,PT_Normal,,,,,AorjKEwX90Gzq94kP8Fgvg,bqdpnZFSQRSAJ0ccrBpmkg,,,N,0,0,,,2014-04-05 12:28,2014-04-05 13:21,admin,admin,
2661,142404,1749,35886,642,0,N,N,N,CP_Drtn,TT_Task,DT_FixedDUR2,TK_NotStart,BL1-FN-3F-1100,Final Paint,,1528,0,80,0,0,0,80,10,0,10,,,,2016-02-08 08:00,2016-02-17 16:00,,2015-08-01 08:00,2015-08-10 16:00,2015-08-01 08:00,2015-08-10 16:00,2015-08-01 08:00,2015-08-10 16:00,2016-02-08 08:00,2016-02-17 16:00,,PT_Normal,,,,,s8VB5vU3C0isznulWMvfjg,XRc4yjWMQXmR45z6UGdFqg,,,N,0,0,,,2014-04-05 12:28,2014-04-05 13:21,admin,admin,
2662,142405,1749,35886,642,0,N,N,N,CP_Drtn,TT_Task,DT_FixedDUR2,TK_NotStart,BL1-FN-3F-1050,Wall Tiling,4433,1136,144,80,0,1184,1184,80,5264.472894,0,5264.472894,,,,2015-09-25 08:00,2015-10-04 16:00,,2015-05-02 08:00,2015-05-12 16:00,2015-05-02 08:00,2015-05-12 16:00,2015-05-02 08:00,2015-05-12 16:00,2015-09-25 08:00,2015-10-04 16:00,,PT_Normal,,,,,zt9ouz9RQkuhmOWo26pJiA,AolHuxM1SniJmzwSFKM9Ow,,,N,0,0,,,2014-04-05 12:28,2014-04-05 13:21,admin,admin,
2663,142406,1749,35886,642,0,N,N,N,CP_Drtn,TT_Task,DT_FixedDUR2,TK_NotStart,BL1-FN-3F-1070,False Ceiling,4433,992,0,120,0,5855,5855,120,48132,0,48132,,,,2015-10-05 08:00,2015-10-19 16:00,,2015-06-03 08:00,2015-06-17 16:00,2015-06-03 08:00,2015-06-17 16:00,2015-06-03 08:00,2015-06-17 16:00,2015-10-05 08:00,2015-10-19 16:00,,PT_Normal,,,,,cbRF+nroF0eiM8YtKuQ2LQ,ovWVF65PThiI9E/2VhoMGg,,,N,0,0,,,2014-04-05 12:28,2014-04-05 13:21,admin,admin,
2664,142407,1749,35886,642,0,N,N,N,CP_Drtn,TT_Task,DT_FixedDUR2,TK_NotStart,BL1-FN-3F-1080,Hand Rails for Stairs,4433,992,0,120,0,43,43,120,9498.792932,0,9498.792932,,,,2015-10-20 08:00,2015-11-03 16:00,,2015-06-18 08:00,2015-07-02 16:00,2015-06-18 08:00,2015-07-02 16:00,2015-06-18 08:00,2015-07-02 16:00,2015-10-20 08:00,2015-11-03 16:00,,PT_Normal,,,,,MsTIq5BV6USKMUfiDGwljQ,/2ckHBh9Q+6mcF1U8L4NyA,,,N,0,0,,,2014-04-05 12:28,2014-04-05 13:21,admin,admin,
2665,142408,1749,35886,642,0,N,N,N,CP_Drtn,TT_Task,DT_FixedDUR2,TK_NotStart,BL1-FN-3F-1090,Doors Installation,,992,0,120,0,0,0,120,31780.061209,0,31780.061209,,,,2015-11-04 08:00,2015-11-18 16:00,,2015-07-03 08:00,2015-07-17 16:00,2015-07-03 08:00,2015-07-17 16:00,2015-07-03 08:00,2015-07-17 16:00,2015-11-04 08:00,2015-11-18 16:00,,PT_Normal,,,,,GordEjw+yUejuPhBKXU18g,1x8HXvJPQ7CXuKlHaN8lsw,,,N,0,0,,,2014-04-05 12:28,2014-04-05 13:21,admin,admin,
2666,142409,1749,35777,642,0,N,N,N,CP_Drtn,TT_Task,DT_FixedDUR2,TK_NotStart,BL1-ST-4F-1000,Reinforcement for Verticals,4433,460,0,64,0,644.336623,644.336623,64,43087.301,0,43087.301,,,,2015-02-19 12:00,2015-03-01 12:00,,2014-12-13 08:00,2014-12-21 16:00,2014-12-13 08:00,2014-12-21 16:00,2014-12-13 08:00,2014-12-21 16:00,2015-02-19 12:00,2015-03-01 12:00,,PT_Normal,,,,,jgVAn1JNIEKyXH1f9Hgvtw,fcnXUY5nSEmE6oGB+mLvkA,,,N,0,0,,,2014-04-05 12:28,2014-04-05 13:21,admin,admin,
2667,142410,1749,35777,642,0,N,N,N,CP_Drtn,TT_Task,DT_FixedDUR2,TK_NotStart,BL1-ST-4F-1020,FW for Verticals,4433,460,0,32,0,7977.591544,7977.591544,32,35076.982,0,35076.982,,,,2015-03-01 12:00,2015-03-05 12:00,,2014-12-22 08:00,2014-12-25 16:00,2014-12-22 08:00,2014-12-25 16:00,2014-12-22 08:00,2014-12-25 16:00,2015-03-01 12:00,2015-03-05 12:00,,PT_Normal,,,,,+W4S45FKsE6M2Dn4uOXj6w,rjY4ZfQ9T42ie9da1SDxyA,,,N,0,0,,,2014-04-05 12:28,2014-04-05 13:21,admin,admin,
2668,142411,1749,35777,642,0,N,N,N,CP_Drtn,TT_Task,DT_FixedDUR2,TK_NotStart,BL1-ST-4F-1030,Concrete Verticals,4433,460,0,8,0,1383.897579,1383.897579,8,23231.449,0,23231.449,,,,2015-03-05 12:00,2015-03-07 12:00,,2014-12-27 08:00,2014-12-27 16:00,2014-12-27 08:00,2014-12-27 16:00,2014-12-27 08:00,2014-12-27 16:00,2015-03-05 12:00,2015-03-07 12:00,,PT_Normal,,,,,B95t8AG7NkeQwpGGkh5VVg,0XHMz0ZURRqkz5HLxVLPwQ,,,N,0,0,,,2014-04-05 12:28,2014-04-05 13:21,admin,admin,
2669,142412,1749,35777,642,0,N,N,N,CP_Drtn,TT_Task,DT_FixedDUR2,TK_NotStart,BL1-ST-4F-1040,FW for Slab,4433,460,0,40,0,11871.120864,11871.120864,40,52195.64,0,52195.64,,,,2015-03-07 12:00,2015-03-12 12:00,,2014-12-28 08:00,2015-01-04 16:00,2014-12-28 08:00,2015-01-04 16:00,2014-12-28 08:00,2015-01-04 16:00,2015-03-07 12:00,2015-03-12 12:00,,PT_Normal,,,,,BbL2Qi7YqUihujTsSRX0Qg,6D8l19OyQF+5F/dQxAU3jg,,,N,0,0,,,2014-04-05 12:28,2014-04-05 13:21,admin,admin,
2670,142413,1749,35777,642,0,N,N,N,CP_Drtn,TT_Task,DT_FixedDUR2,TK_NotStart,BL1-ST-4F-1050,Reinforcement for Slab,4433,460,0,40,0,1189.256501,1189.256501,40,79516.76,0,79516.76,,,,2015-03-12 12:00,2015-03-18 12:00,,2015-01-05 08:00,2015-01-10 16:00,2015-01-05 08:00,2015-01-10 16:00,2015-01-05 08:00,2015-01-10 16:00,2015-03-12 12:00,2015-03-18 12:00,,PT_Normal,,,,,6Fwom9UfREioI3EEjZGI/Q,4A0DMqnlSIOrmIYd+b9qaQ,,,N,0,0,,,2014-04-05 12:28,2014-04-05 13:21,admin,admin,
2671,142414,1749,35777,642,0,N,N,N,CP_Drtn,TT_Task,DT_FixedDUR2,TK_NotStart,BL1-ST-4F-1070,Concrete for Slab,4433,460,0,8,0,3063.816029,3063.816029,8,51430.978,0,51430.978,,,,2015-03-18 12:00,2015-03-19 12:00,,2015-01-11 08:00,2015-01-11 16:00,2015-01-11 08:00,2015-01-11 16:00,2015-01-11 08:00,2015-01-11 16:00,2015-03-18 12:00,2015-03-19 12:00,,PT_Normal,,,,,1lpik7lO00iMSByZNvCuZQ,YvVejCZyQlO/FdahDZWsVw,,,N,0,0,,,2014-04-05 12:28,2014-04-05 13:21,admin,admin,
2672,142415,1749,35777,642,0,N,N,N,CP_Drtn,TT_Task,DT_FixedDUR2,TK_NotStart,BL1-ST-4F-1010,MEP Works in Vertical Element,,492,32,40,0,160,160,40,1803.546829,0,1803.546829,,,,2015-02-28 12:00,2015-03-05 12:00,,2014-12-16 08:00,2014-12-21 16:00,2014-12-16 08:00,2014-12-21 16:00,2014-12-16 08:00,2014-12-21 16:00,2015-02-28 12:00,2015-03-05 12:00,,PT_Normal,,,,,RaRqoxotmUKwLTHNrJM+7w,9R1HvS9PRNeVc5ug3Yj/Bg,,,N,0,0,,,2014-04-05 12:28,2014-04-05 13:21,admin,admin,
2673,142416,1749,35777,642,0,N,N,N,CP_Drtn,TT_Task,DT_FixedDUR2,TK_NotStart,BL1-ST-4F-1060,MEP Works in Slab & Beams,,460,0,40,0,320,320,40,3354.018234,0,3354.018234,,,,2015-03-12 12:00,2015-03-18 12:00,,2015-01-05 08:00,2015-01-10 16:00,2015-01-05 08:00,2015-01-10 16:00,2015-01-05 08:00,2015-01-10 16:00,2015-03-12 12:00,2015-03-18 12:00,,PT_Normal,,,,,W/jhybLp+UOJOvvQabz3fA,v9/++TKDSrGFK0Ng6mqEMQ,,,N,0,0,,,2014-04-05 12:28,2014-04-05 13:21,admin,admin,
2674,142417,1749,35814,642,0,N,N,N,CP_Drtn,TT_Task,DT_FixedDUR2,TK_NotStart,BL1-FN-4F-1000,Block Works,4433,856,0,160,0,1988,1988,160,26454.943775,0,26454.943775,,,,2015-07-05 08:00,2015-07-24 16:00,,2015-03-08 08:00,2015-03-30 16:00,2015-03-08 08:00,2015-03-30 16:00,2015-03-08 08:00,2015-03-30 16:00,2015-07-05 08:00,2015-07-24 16:00,,PT_Normal,,,,,j0HgPhU/+ESZKhMLwieTNQ,pxc3iVXnS+qiXYAplfEHqA,,,N,0,0,,,2014-04-05 12:28,2014-04-05 13:21,admin,admin,
2675,142418,1749,35814,642,0,N,N,N,CP_Drtn,TT_Task,DT_FixedDUR2,TK_NotStart,BL1-FN-4F-1010,Plaster,4433,928,0,144,0,2245.5,2245.5,144,26410.040902,0,26410.040902,,,,2015-08-15 08:00,2015-09-01 16:00,,2015-04-14 08:00,2015-05-04 16:00,2015-04-14 08:00,2015-05-04 16:00,2015-04-14 08:00,2015-05-04 16:00,2015-08-15 08:00,2015-09-01 16:00,,PT_Normal,,,,,leDCdE3EZkC+P5YhFdKiKw,V/uSaU/8Q/aSenE+wrCjjQ,,,N,0,0,,,2014-04-05 12:28,2014-04-05 13:21,admin,admin,
2676,142419,1749,35814,642,0,N,N,N,CP_Drtn,TT_Task,DT_FixedDUR2,TK_NotStart,BL1-FN-4F-1020,Paint 1st Coat,4433,928,0,120,0,674,674,120,4079.482684,0,4079.482684,,,,2015-09-02 08:00,2015-09-16 16:00,,2015-05-05 08:00,2015-05-21 16:00,2015-05-05 08:00,2015-05-21 16:00,2015-05-05 08:00,2015-05-21 16:00,2015-09-02 08:00,2015-09-16 16:00,,PT_Normal,,,,,DrArsnvM0EmF5SJDjoz/4A,DLbvmaveSeST5v4lyz3TSw,,,N,0,0,,,2014-04-05 12:28,2014-04-05 13:21,admin,admin,
2677,142420,1749,35814,642,0,N,N,N,CP_Drtn,TT_Task,DT_FixedDUR2,TK_NotStart,BL1-FN-4F-1030,Ceiling Paint,4433,928,0,80,0,26.6,26.6,80,170.321261,0,170.321261,,,,2015-09-12 08:00,2015-09-21 16:00,,2015-05-17 08:00,2015-05-27 16:00,2015-05-17 08:00,2015-05-27 16:00,2015-05-17 08:00,2015-05-27 16:00,2015-09-12 08:00,2015-09-21 16:00,,PT_Normal,,,,,1HDYYdUYOkeuDf1b5HFziA,3Ps4ZN1qQqyE1U4WbF7jnA,,,N,0,0,,,2014-04-05 12:28,2014-04-05 13:21,admin,admin,
2678,142421,1749,35814,642,0,N,N,N,CP_Drtn,TT_Task,DT_FixedDUR2,TK_NotStart,BL1-FN-4F-1040,Waterproofing,4433,928,0,40,0,6.9,6.9,40,136.19247,0,136.19247,,,,2015-09-22 08:00,2015-09-26 16:00,,2015-05-28 08:00,2015-06-02 16:00,2015-05-28 08:00,2015-06-02 16:00,2015-05-28 08:00,2015-06-02 16:00,2015-09-22 08:00,2015-09-26 16:00,,PT_Normal,,,,,EVJgaA1gx0us3iIMkXK3IQ,25bliKUuSHyu5kqGDpykPg,,,N,0,0,,,2014-04-05 12:28,2014-04-05 13:21,admin,admin,
2679,142422,1749,35814,642,0,N,N,N,CP_Drtn,TT_Task,DT_FixedDUR2,TK_NotStart,BL1-FN-4F-1060,Flooring Works,4433,928,0,160,0,1346,1346,160,31393.064434,0,31393.064434,,,,2015-09-27 08:00,2015-10-16 16:00,,2015-06-03 08:00,2015-06-22 16:00,2015-06-03 08:00,2015-06-22 16:00,2015-06-03 08:00,2015-06-22 16:00,2015-09-27 08:00,2015-10-16 16:00,,PT_Normal,,,,,ib1qOfeO1UC2Ap4wejkw/Q,Y4j5g0oJScKdj7HdLl+iPg,,,N,0,0,,,2014-04-05 12:28,2014-04-05 13:21,admin,admin,
2680,142423,1749,35814,642,0,N,N,N,CP_Drtn,TT_Task,DT_FixedDUR2,TK_NotStart,BL1-FN-4F-1100,Final Paint,,1360,0,80,0,0,0,80,10,0,10,,,,2016-02-10 08:00,2016-02-19 16:00,,2015-08-24 08:00,2015-09-02 16:00,2015-08-24 08:00,2015-09-02 16:00,2015-08-24 08:00,2015-09-02 16:00,2016-02-10 08:00,2016-02-19 16:00,,PT_Normal,,,,,UAhDejsdLkCllgMc4h1/Cg,U04x5SpFQ5So8bVqNkZ1pQ,,,N,0,0,,,2014-04-05 12:28,2014-04-05 13:21,admin,admin,
2681,142424,1749,35814,642,0,N,N,N,CP_Drtn,TT_Task,DT_FixedDUR2,TK_NotStart,BL1-FN-4F-1050,Wall Tiling,4433,1072,144,80,0,1184,1184,80,5264.472894,0,5264.472894,,,,2015-10-10 08:00,2015-10-19 16:00,,2015-05-28 08:00,2015-06-07 16:00,2015-05-28 08:00,2015-06-07 16:00,2015-05-28 08:00,2015-06-07 16:00,2015-10-10 08:00,2015-10-19 16:00,,PT_Normal,,,,,5nbJ8a1Y6USXNHJCw33oUw,4TUcCHPGQ9evLGuZIDc5SQ,,,N,0,0,,,2014-04-05 12:28,2014-04-05 13:21,admin,admin,
2682,142425,1749,35814,642,0,N,N,N,CP_Drtn,TT_Task,DT_FixedDUR2,TK_NotStart,BL1-FN-4F-1070,False Ceiling,4433,928,0,120,0,5855,5855,120,49075,0,49075,,,,2015-10-20 08:00,2015-11-03 16:00,,2015-06-26 08:00,2015-07-10 16:00,2015-06-26 08:00,2015-07-10 16:00,2015-06-26 08:00,2015-07-10 16:00,2015-10-20 08:00,2015-11-03 16:00,,PT_Normal,,,,,ozBgGJaWAku6hGjkeWpRag,671lFbieQAO5vPXsi6VmnA,,,N,0,0,,,2014-04-05 12:28,2014-04-05 13:21,admin,admin,
2683,142426,1749,35814,642,0,N,N,N,CP_Drtn,TT_Task,DT_FixedDUR2,TK_NotStart,BL1-FN-4F-1080,Hand Rails for Stairs,4433,928,0,120,0,43,43,120,9498.792932,0,9498.792932,,,,2015-11-04 08:00,2015-11-18 16:00,,2015-07-11 08:00,2015-07-25 16:00,2015-07-11 08:00,2015-07-25 16:00,2015-07-11 08:00,2015-07-25 16:00,2015-11-04 08:00,2015-11-18 16:00,,PT_Normal,,,,,/k0Whe1y50OEwz/1E1kP5w,ktaj9ceNSEq2T/hV84NVYw,,,N,0,0,,,2014-04-05 12:28,2014-04-05 13:21,admin,admin,
2684,142427,1749,35814,642,0,N,N,N,CP_Drtn,TT_Task,DT_FixedDUR2,TK_NotStart,BL1-FN-4F-1090,Doors Installation,,928,0,120,0,0,0,120,31780.061209,0,31780.061209,,,,2015-11-19 08:00,2015-12-03 16:00,,2015-07-26 08:00,2015-08-09 16:00,2015-07-26 08:00,2015-08-09 16:00,2015-07-26 08:00,2015-08-09 16:00,2015-11-19 08:00,2015-12-03 16:00,,PT_Normal,,,,,R9F6IgKd20ycT+HxwxaMBg,pAJ6sVoYQD2k056vUiKrjA,,,N,0,0,,,2014-04-05 12:28,2014-04-05 13:21,admin,admin,
2685,142428,1749,35681,642,0,N,N,N,CP_Drtn,TT_Task,DT_FixedDUR2,TK_NotStart,BL1-ST-5F-1000,Reinforcement for Verticals,4433,460,0,64,0,644.336623,644.336623,64,43087.301,0,43087.301,,,,2015-03-19 12:00,2015-03-29 12:00,,2015-01-12 08:00,2015-01-20 16:00,2015-01-12 08:00,2015-01-20 16:00,2015-01-12 08:00,2015-01-20 16:00,2015-03-19 12:00,2015-03-29 12:00,,PT_Normal,,,,,PZ61pJLn1UaZ3ywCPOOH0Q,RjVhN27OTG6gyu3f5Yu/3w,,,N,0,0,,,2014-04-05 12:28,2014-04-05 13:21,admin,admin,
2686,142429,1749,35681,642,0,N,N,N,CP_Drtn,TT_Task,DT_FixedDUR2,TK_NotStart,BL1-ST-5F-1020,FW for Verticals,4433,460,0,32,0,7977.591544,7977.591544,32,35076.982,0,35076.982,,,,2015-03-29 12:00,2015-04-02 12:00,,2015-01-21 08:00,2015-01-25 16:00,2015-01-21 08:00,2015-01-25 16:00,2015-01-21 08:00,2015-01-25 16:00,2015-03-29 12:00,2015-04-02 12:00,,PT_Normal,,,,,1D7zkwxhA0SihaMwVXz/VQ,24eKlOUoRaCa16RlxeVUHw,,,N,0,0,,,2014-04-05 12:28,2014-04-05 13:21,admin,admin,
2687,142430,1749,35681,642,0,N,N,N,CP_Drtn,TT_Task,DT_FixedDUR2,TK_NotStart,BL1-ST-5F-1030,Concrete Verticals,4433,460,0,8,0,1383.897579,1383.897579,8,23231.449,0,23231.449,,,,2015-04-02 12:00,2015-04-04 12:00,,2015-01-26 08:00,2015-01-26 16:00,2015-01-26 08:00,2015-01-26 16:00,2015-01-26 08:00,2015-01-26 16:00,2015-04-02 12:00,2015-04-04 12:00,,PT_Normal,,,,,j1J9XTusW0GaEqVvmn0glw,YGX2v8qFSn+W7tHGh/ObJA,,,N,0,0,,,2014-04-05 12:28,2014-04-05 13:21,admin,admin,
2688,142431,1749,35681,642,0,N,N,N,CP_Drtn,TT_Task,DT_FixedDUR2,TK_NotStart,BL1-ST-5F-1040,FW for Slab,4433,460,0,40,0,11871.120864,11871.120864,40,52195.64,0,52195.64,,,,2015-04-04 12:00,2015-04-09 12:00,,2015-01-27 08:00,2015-02-01 16:00,2015-01-27 08:00,2015-02-01 16:00,2015-01-27 08:00,2015-02-01 16:00,2015-04-04 12:00,2015-04-09 12:00,,PT_Normal,,,,,oFNQ7ACvbkedSfJMw9Sy6A,BCccW/+ZSsK0geRV3Y/lOg,,,N,0,0,,,2014-04-05 12:28,2014-04-05 13:21,admin,admin,
2689,142432,1749,35681,642,0,N,N,N,CP_Drtn,TT_Task,DT_FixedDUR2,TK_NotStart,BL1-ST-5F-1050,Reinforcement for Slab,4433,460,0,40,0,1189.256501,1189.256501,40,79516.76,0,79516.76,,,,2015-04-09 12:00,2015-04-15 12:00,,2015-02-02 08:00,2015-02-07 16:00,2015-02-02 08:00,2015-02-07 16:00,2015-02-02 08:00,2015-02-07 16:00,2015-04-09 12:00,2015-04-15 12:00,,PT_Normal,,,,,TLUjkNeAaEyjDOiOXfZ/pg,R4kQQ/fiQVS2peKSHEAiXA,,,N,0,0,,,2014-04-05 12:28,2014-04-05 13:21,admin,admin,
2690,142433,1749,35681,642,0,N,N,N,CP_Drtn,TT_Task,DT_FixedDUR2,TK_NotStart,BL1-ST-5F-1070,Concrete for Slab,4433,460,0,8,0,3063.816029,3063.816029,8,51430.978,0,51430.978,,,,2015-04-15 12:00,2015-04-16 12:00,,2015-02-08 08:00,2015-02-08 16:00,2015-02-08 08:00,2015-02-08 16:00,2015-02-08 08:00,2015-02-08 16:00,2015-04-15 12:00,2015-04-16 12:00,,PT_Normal,,,,,qeTbiOmj8UOtt79XGHyVMg,8DwHoHOfSvmmIcVnxa9n+g,,,N,0,0,,,2014-04-05 12:28,2014-04-05 13:21,admin,admin,
2691,142434,1749,35681,642,0,N,N,N,CP_Drtn,TT_Task,DT_FixedDUR2,TK_NotStart,BL1-ST-5F-1010,MEP Works in Vertical Element,,492,32,40,0,160,160,40,1803.546829,0,1803.546829,,,,2015-03-28 12:00,2015-04-02 12:00,,2015-01-15 08:00,2015-01-20 16:00,2015-01-15 08:00,2015-01-20 16:00,2015-01-15 08:00,2015-01-20 16:00,2015-03-28 12:00,2015-04-02 12:00,,PT_Normal,,,,,T0xmoZkKXUKoQInRkDJPYg,kwj4/33DQi+kMWyqGqdZjQ,,,N,0,0,,,2014-04-05 12:28,2014-04-05 13:21,admin,admin,
2692,142435,1749,35681,642,0,N,N,N,CP_Drtn,TT_Task,DT_FixedDUR2,TK_NotStart,BL1-ST-5F-1060,MEP Works in Slab & Beams,,460,0,40,0,320,320,40,3354.018234,0,3354.018234,,,,2015-04-09 12:00,2015-04-15 12:00,,2015-02-02 08:00,2015-02-07 16:00,2015-02-02 08:00,2015-02-07 16:00,2015-02-02 08:00,2015-02-07 16:00,2015-04-09 12:00,2015-04-15 12:00,,PT_Normal,,,,,6rPMidiR40KzQzveIWq/uw,PPU+t5e3SX+LJp/OMASvKg,,,N,0,0,,,2014-04-05 12:28,2014-04-05 13:21,admin,admin,
2693,142436,1749,35750,642,0,N,N,N,CP_Drtn,TT_Task,DT_FixedDUR2,TK_NotStart,BL1-FN-5F-1000,Block Works,4433,768,0,160,0,1988,1988,160,26454.943775,0,26454.943775,,,,2015-07-17 08:00,2015-08-05 16:00,,2015-04-04 08:00,2015-04-26 16:00,2015-04-04 08:00,2015-04-26 16:00,2015-04-04 08:00,2015-04-26 16:00,2015-07-17 08:00,2015-08-05 16:00,,PT_Normal,,,,,5IMjIe2ODU6wswzD4cGtRA,qsIzSGpdTWG1IDGq0+ifEw,,,N,0,0,,,2014-04-05 12:28,2014-04-05 13:21,admin,admin,
2694,142437,1749,35750,642,0,N,N,N,CP_Drtn,TT_Task,DT_FixedDUR2,TK_NotStart,BL1-FN-5F-1010,Plaster,4433,864,0,144,0,2245.5,2245.5,144,26410.040902,0,26410.040902,,,,2015-08-30 08:00,2015-09-16 16:00,,2015-05-11 08:00,2015-05-31 16:00,2015-05-11 08:00,2015-05-31 16:00,2015-05-11 08:00,2015-05-31 16:00,2015-08-30 08:00,2015-09-16 16:00,,PT_Normal,,,,,OZXMKYAraUe/jgSS231JOw,iQm9ngz4SCybbpHz+kISIA,,,N,0,0,,,2014-04-05 12:28,2014-04-05 13:21,admin,admin,
2695,142438,1749,35750,642,0,N,N,N,CP_Drtn,TT_Task,DT_FixedDUR2,TK_NotStart,BL1-FN-5F-1020,Paint 1st Coat,4433,864,0,120,0,674,674,120,4079.482684,0,4079.482684,,,,2015-09-17 08:00,2015-10-01 16:00,,2015-06-01 08:00,2015-06-15 16:00,2015-06-01 08:00,2015-06-15 16:00,2015-06-01 08:00,2015-06-15 16:00,2015-09-17 08:00,2015-10-01 16:00,,PT_Normal,,,,,+PCwmIGKN02hLvJPDSBjLw,TR/iuWwEQLWC8d4S4sfUmQ,,,N,0,0,,,2014-04-05 12:28,2014-04-05 13:21,admin,admin,
2696,142439,1749,35750,642,0,N,N,N,CP_Drtn,TT_Task,DT_FixedDUR2,TK_NotStart,BL1-FN-5F-1030,Ceiling Paint,4433,864,0,80,0,26.6,26.6,80,170.321261,0,170.321261,,,,2015-09-27 08:00,2015-10-06 16:00,,2015-06-11 08:00,2015-06-20 16:00,2015-06-11 08:00,2015-06-20 16:00,2015-06-11 08:00,2015-06-20 16:00,2015-09-27 08:00,2015-10-06 16:00,,PT_Normal,,,,,InzJXDhTok2Top3Ry1QkXQ,xPdE8h5nSteBYP+dt7B6Hg,,,N,0,0,,,2014-04-05 12:28,2014-04-05 13:21,admin,admin,
2697,142440,1749,35750,642,0,N,N,N,CP_Drtn,TT_Task,DT_FixedDUR2,TK_NotStart,BL1-FN-5F-1040,Waterproofing,4433,864,0,40,0,6.9,6.9,40,136.19247,0,136.19247,,,,2015-10-07 08:00,2015-10-11 16:00,,2015-06-21 08:00,2015-06-25 16:00,2015-06-21 08:00,2015-06-25 16:00,2015-06-21 08:00,2015-06-25 16:00,2015-10-07 08:00,2015-10-11 16:00,,PT_Normal,,,,,LvOrzlavIUCy0G7UFoSgfQ,zDzrEiVIQC+ISh4TnZmdxQ,,,N,0,0,,,2014-04-05 12:28,2014-04-05 13:21,admin,admin,
2698,142441,1749,35750,642,0,N,N,N,CP_Drtn,TT_Task,DT_FixedDUR2,TK_NotStart,BL1-FN-5F-1060,Flooring Works,4433,864,0,160,0,1346,1346,160,31393.064434,0,31393.064434,,,,2015-10-12 08:00,2015-10-31 16:00,,2015-06-26 08:00,2015-07-15 16:00,2015-06-26 08:00,2015-07-15 16:00,2015-06-26 08:00,2015-07-15 16:00,2015-10-12 08:00,2015-10-31 16:00,,PT_Normal,,,,,dCT0YZPH5UqMoMY5cbPiVw,PT45metmSlGVPx4shgphjA,,,N,0,0,,,2014-04-05 12:28,2014-04-05 13:21,admin,admin,
2699,142442,1749,35750,642,0,N,N,N,CP_Drtn,TT_Task,DT_FixedDUR2,TK_NotStart,BL1-FN-5F-1100,Final Paint,,1192,0,80,0,0,0,80,10,0,10,,,,2016-02-12 08:00,2016-02-21 16:00,,2015-09-16 08:00,2015-09-25 16:00,2015-09-16 08:00,2015-09-25 16:00,2015-09-16 08:00,2015-09-25 16:00,2016-02-12 08:00,2016-02-21 16:00,,PT_Normal,,,,,cQFHEPDixU+FUnUVC1uKww,D78KYlQiSZKRg+pLNeNibQ,,,N,0,0,,,2014-04-05 12:28,2014-04-05 13:21,admin,admin,
2700,142443,1749,35750,642,0,N,N,N,CP_Drtn,TT_Task,DT_FixedDUR2,TK_NotStart,BL1-FN-5F-1050,Wall Tiling,4433,1008,144,80,0,1184,1184,80,5264.472894,0,5264.472894,,,,2015-10-25 08:00,2015-11-03 16:00,,2015-06-21 08:00,2015-06-30 16:00,2015-06-21 08:00,2015-06-30 16:00,2015-06-21 08:00,2015-06-30 16:00,2015-10-25 08:00,2015-11-03 16:00,,PT_Normal,,,,,yYU1sdEc6E6nZy1AbDhq6A,DZsfFIxER+q6G1e1UBghsw,,,N,0,0,,,2014-04-05 12:28,2014-04-05 13:21,admin,admin,
2701,142444,1749,35750,642,0,N,N,N,CP_Drtn,TT_Task,DT_FixedDUR2,TK_NotStart,BL1-FN-5F-1070,False Ceiling,4433,864,0,120,0,5855,5855,120,49075,0,49075,,,,2015-11-04 08:00,2015-11-18 16:00,,2015-07-19 08:00,2015-08-02 16:00,2015-07-19 08:00,2015-08-02 16:00,2015-07-19 08:00,2015-08-02 16:00,2015-11-04 08:00,2015-11-18 16:00,,PT_Normal,,,,,J9xntZjYuUqO9lxyrHJ2LA,sE4q/qVwRuqTapREzHCCUA,,,N,0,0,,,2014-04-05 12:28,2014-04-05 13:21,admin,admin,
2702,142445,1749,35750,642,0,N,N,N,CP_Drtn,TT_Task,DT_FixedDUR2,TK_NotStart,BL1-FN-5F-1080,Hand Rails for Stairs,4433,864,0,120,0,43,43,120,9498.792932,0,9498.792932,,,,2015-11-19 08:00,2015-12-03 16:00,,2015-08-03 08:00,2015-08-17 16:00,2015-08-03 08:00,2015-08-17 16:00,2015-08-03 08:00,2015-08-17 16:00,2015-11-19 08:00,2015-12-03 16:00,,PT_Normal,,,,,U4j6iNL3xEaxkNTu5z9qJw,tppY5iANR72jyMKYtG1uuA,,,N,0,0,,,2014-04-05 12:28,2014-04-05 13:21,admin,admin,
2703,142446,1749,35750,642,0,N,N,N,CP_Drtn,TT_Task,DT_FixedDUR2,TK_NotStart,BL1-FN-5F-1090,Doors Installation,,864,0,120,0,0,0,120,31780.061209,0,31780.061209,,,,2015-12-04 08:00,2015-12-18 16:00,,2015-08-18 08:00,2015-09-01 16:00,2015-08-18 08:00,2015-09-01 16:00,2015-08-18 08:00,2015-09-01 16:00,2015-12-04 08:00,2015-12-18 16:00,,PT_Normal,,,,,MgOoI2avrEawfSLfzCigBQ,ozSy+38FRWCygB6VU0qBtA,,,N,0,0,,,2014-04-05 12:28,2014-04-05 13:21,admin,admin,
2704,142447,1749,35806,642,0,N,N,N,CP_Drtn,TT_Task,DT_FixedDUR2,TK_NotStart,BL1-ST-6F-1000,Reinforcement for Verticals,4433,460,0,56,0,644.336623,644.336623,56,43086.301,0,43086.301,,,,2015-04-16 12:00,2015-04-25 12:00,,2015-02-09 08:00,2015-02-16 16:00,2015-02-09 08:00,2015-02-16 16:00,2015-02-09 08:00,2015-02-16 16:00,2015-04-16 12:00,2015-04-25 12:00,,PT_Normal,,,,,RVpJebuqoEWI7agJxnEqTA,l+FB/tPzTfiWGQiVIcVK/g,,,N,0,0,,,2014-04-05 12:28,2014-04-05 13:21,admin,admin,
2705,142448,1749,35806,642,0,N,N,N,CP_Drtn,TT_Task,DT_FixedDUR2,TK_NotStart,BL1-ST-6F-1020,FW for Verticals,4433,460,0,32,0,7977.591544,7977.591544,32,35076.982,0,35076.982,,,,2015-04-25 12:00,2015-04-29 12:00,,2015-02-17 08:00,2015-02-21 16:00,2015-02-17 08:00,2015-02-21 16:00,2015-02-17 08:00,2015-02-21 16:00,2015-04-25 12:00,2015-04-29 12:00,,PT_Normal,,,,,eqWe59npT0WFuyyonf55VQ,ZRIsW3YHS3qYBh8dcalRog,,,N,0,0,,,2014-04-05 12:28,2014-04-05 13:21,admin,admin,
2706,142449,1749,35806,642,0,N,N,N,CP_Drtn,TT_Task,DT_FixedDUR2,TK_NotStart,BL1-ST-6F-1030,Concrete Verticals,4433,460,0,8,0,1383.897579,1383.897579,8,23231.449,0,23231.449,,,,2015-04-29 12:00,2015-04-30 12:00,,2015-02-22 08:00,2015-02-22 16:00,2015-02-22 08:00,2015-02-22 16:00,2015-02-22 08:00,2015-02-22 16:00,2015-04-29 12:00,2015-04-30 12:00,,PT_Normal,,,,,ooJwxna4nU6D2kxB8BpK6g,rd9MwBcpS2WyrhqNHn+yjw,,,N,0,0,,,2014-04-05 12:28,2014-04-05 13:21,admin,admin,
2707,142450,1749,35806,642,0,N,N,N,CP_Drtn,TT_Task,DT_FixedDUR2,TK_NotStart,BL1-ST-6F-1040,FW for Slab,4433,460,0,40,0,11871.120864,11871.120864,40,52195.64,0,52195.64,,,,2015-04-30 12:00,2015-05-06 12:00,,2015-02-23 08:00,2015-02-28 16:00,2015-02-23 08:00,2015-02-28 16:00,2015-02-23 08:00,2015-02-28 16:00,2015-04-30 12:00,2015-05-06 12:00,,PT_Normal,,,,,cfFij5MRx0Cdk9bM+5RX+w,ONWv/kVRQjqGXl9lN6eKOw,,,N,0,0,,,2014-04-05 12:28,2014-04-05 13:21,admin,admin,
2708,142451,1749,35806,642,0,N,N,N,CP_Drtn,TT_Task,DT_FixedDUR2,TK_NotStart,BL1-ST-6F-1050,Reinforcement for Slab,4433,460,0,40,0,1189.256501,1189.256501,40,79516.76,0,79516.76,,,,2015-05-06 12:00,2015-05-12 12:00,,2015-03-01 08:00,2015-03-05 16:00,2015-03-01 08:00,2015-03-05 16:00,2015-03-01 08:00,2015-03-05 16:00,2015-05-06 12:00,2015-05-12 12:00,,PT_Normal,,,,,aIeI+U5cIkSsARobB3T5GQ,9rmqKmZYS5WPAU+L26S9GA,,,N,0,0,,,2014-04-05 12:28,2014-04-05 13:21,admin,admin,
2709,142452,1749,35806,642,0,N,N,N,CP_Drtn,TT_Task,DT_FixedDUR2,TK_NotStart,BL1-ST-6F-1070,Concrete for Slab,4433,460,0,8,0,3063.816029,3063.816029,8,51430.978,0,51430.978,,,,2015-05-12 12:00,2015-05-13 12:00,,2015-03-07 08:00,2015-03-07 16:00,2015-03-07 08:00,2015-03-07 16:00,2015-03-07 08:00,2015-03-07 16:00,2015-05-12 12:00,2015-05-13 12:00,,PT_Normal,,,,,DiujcV0tDkiA6JUK2jJsfA,Nu/ZuzzvQymEI140jUFc3g,,,N,0,0,,,2014-04-05 12:28,2014-04-05 13:21,admin,admin,
2710,142453,1749,35806,642,0,N,N,N,CP_Drtn,TT_Task,DT_FixedDUR2,TK_NotStart,BL1-ST-6F-1010,MEP Works in Vertical Element,,492,32,40,0,160,160,40,1803.546829,0,1803.546829,,,,2015-04-23 12:00,2015-04-29 12:00,,2015-02-11 08:00,2015-02-16 16:00,2015-02-11 08:00,2015-02-16 16:00,2015-02-11 08:00,2015-02-16 16:00,2015-04-23 12:00,2015-04-29 12:00,,PT_Normal,,,,,Pa5nDT43IkuE9TQWMz1dJw,N6rZlRgPRViP+cVHrdYU2Q,,,N,0,0,,,2014-04-05 12:28,2014-04-05 13:21,admin,admin,
2711,142454,1749,35806,642,0,N,N,N,CP_Drtn,TT_Task,DT_FixedDUR2,TK_NotStart,BL1-ST-6F-1060,MEP Works in Slab & Beams,,460,0,40,0,320,320,40,3354.018234,0,3354.018234,,,,2015-05-06 12:00,2015-05-12 12:00,,2015-03-01 08:00,2015-03-05 16:00,2015-03-01 08:00,2015-03-05 16:00,2015-03-01 08:00,2015-03-05 16:00,2015-05-06 12:00,2015-05-12 12:00,,PT_Normal,,,,,4uVc37fD0k6wo1X3XoCA1A,Tm6rkXcjQRWb44qJWhBBwA,,,N,0,0,,,2014-04-05 12:28,2014-04-05 13:21,admin,admin,
2712,142455,1749,35714,642,0,N,N,N,CP_Drtn,TT_Task,DT_FixedDUR2,TK_NotStart,BL1-FN-6F-1000,Block Works,4433,768,0,144,0,1988,1988,144,26452.943775,0,26452.943775,,,,2015-07-31 08:00,2015-08-17 16:00,,2015-04-20 08:00,2015-05-10 16:00,2015-04-20 08:00,2015-05-10 16:00,2015-04-20 08:00,2015-05-10 16:00,2015-07-31 08:00,2015-08-17 16:00,,PT_Normal,,,,,V9GZKMiy8UaTKJ9EOgj+2A,oZBJLPBwSDKgg5uuQQUTYA,,,N,0,0,,,2014-04-05 12:28,2014-04-05 13:21,admin,admin,
2713,142456,1749,35714,642,0,N,N,N,CP_Drtn,TT_Task,DT_FixedDUR2,TK_NotStart,BL1-FN-6F-1010,Plaster,4433,904,0,128,0,2245.5,2245.5,128,26408.040902,0,26408.040902,,,,2015-09-16 08:00,2015-10-01 16:00,,2015-05-25 08:00,2015-06-10 16:00,2015-05-25 08:00,2015-06-10 16:00,2015-05-25 08:00,2015-06-10 16:00,2015-09-16 08:00,2015-10-01 16:00,,PT_Normal,,,,,x2ERzgqb7E2PJ5PAVY2r4w,DZGMoiJtQ12J1eg9kp4s4A,,,N,0,0,,,2014-04-05 12:28,2014-04-05 13:21,admin,admin,
2714,142457,1749,35714,642,0,N,N,N,CP_Drtn,TT_Task,DT_FixedDUR2,TK_NotStart,BL1-FN-6F-1020,Paint 1st Coat,4433,904,0,120,0,674,674,120,4079.482684,0,4079.482684,,,,2015-10-02 08:00,2015-10-16 16:00,,2015-06-11 08:00,2015-06-25 16:00,2015-06-11 08:00,2015-06-25 16:00,2015-06-11 08:00,2015-06-25 16:00,2015-10-02 08:00,2015-10-16 16:00,,PT_Normal,,,,,r6z2CsU/u0yz5Ic8IAtY6Q,VfoT1vgaQyaWHGpF+3D6OQ,,,N,0,0,,,2014-04-05 12:28,2014-04-05 13:21,admin,admin,
2715,142458,1749,35714,642,0,N,N,N,CP_Drtn,TT_Task,DT_FixedDUR2,TK_NotStart,BL1-FN-6F-1030,Ceiling Paint,4433,904,0,80,0,76,76,80,463,0,463,,,,2015-10-12 08:00,2015-10-21 16:00,,2015-06-21 08:00,2015-06-30 16:00,2015-06-21 08:00,2015-06-30 16:00,2015-06-21 08:00,2015-06-30 16:00,2015-10-12 08:00,2015-10-21 16:00,,PT_Normal,,,,,mboNXFMpQE66mKwcfRfUfA,4w5ExwWbQmKHPi+tnqomvg,,,N,0,0,,,2014-04-05 12:28,2014-04-05 13:21,admin,admin,
2716,142459,1749,35714,642,0,N,N,N,CP_Drtn,TT_Task,DT_FixedDUR2,TK_NotStart,BL1-FN-6F-1040,Waterproofing,4433,904,0,40,0,14,14,40,268,0,268,,,,2015-10-22 08:00,2015-10-26 16:00,,2015-07-01 08:00,2015-07-05 16:00,2015-07-01 08:00,2015-07-05 16:00,2015-07-01 08:00,2015-07-05 16:00,2015-10-22 08:00,2015-10-26 16:00,,PT_Normal,,,,,3Fk1CKuZzEmbyjz1IR++QQ,0bTNnJiaRiu+dczaZ/7NIQ,,,N,0,0,,,2014-04-05 12:28,2014-04-05 13:21,admin,admin,
2717,142460,1749,35714,642,0,N,N,N,CP_Drtn,TT_Task,DT_FixedDUR2,TK_NotStart,BL1-FN-6F-1060,Flooring Works,4433,904,0,160,0,1346,1346,160,31393.064434,0,31393.064434,,,,2015-10-27 08:00,2015-11-15 16:00,,2015-07-06 08:00,2015-07-25 16:00,2015-07-06 08:00,2015-07-25 16:00,2015-07-06 08:00,2015-07-25 16:00,2015-10-27 08:00,2015-11-15 16:00,,PT_Normal,,,,,5VDoCX8by0Gep/kmZIsHIA,VFNXMCzcQ1untVakU7gvSg,,,N,0,0,,,2014-04-05 12:28,2014-04-05 13:21,admin,admin,
2718,142461,1749,35714,642,0,N,N,N,CP_Drtn,TT_Task,DT_FixedDUR2,TK_NotStart,BL1-FN-6F-1100,Final Paint,,1088,0,80,0,0,0,80,10,0,10,,,,2016-02-14 08:00,2016-02-23 16:00,,2015-10-01 08:00,2015-10-10 16:00,2015-10-01 08:00,2015-10-10 16:00,2015-10-01 08:00,2015-10-10 16:00,2016-02-14 08:00,2016-02-23 16:00,,PT_Normal,,,,,O+YmeVVmxkuk7gRQo2Yn8w,509lHppuQQ+dPvjleDwhTA,,,N,0,0,,,2014-04-05 12:28,2014-04-05 13:21,admin,admin,
2719,142462,1749,35714,642,0,N,N,N,CP_Drtn,TT_Task,DT_FixedDUR2,TK_NotStart,BL1-FN-6F-1050,Wall Tiling,4433,1048,144,80,0,1184,1184,80,5264.472894,0,5264.472894,,,,2015-11-09 08:00,2015-11-18 16:00,,2015-07-01 08:00,2015-07-10 16:00,2015-07-01 08:00,2015-07-10 16:00,2015-07-01 08:00,2015-07-10 16:00,2015-11-09 08:00,2015-11-18 16:00,,PT_Normal,,,,,PHLl+afj+km2pZ/vsNfSiQ,rQH9SZPcTfaAr2H6YtdmHg,,,N,0,0,,,2014-04-05 12:28,2014-04-05 13:21,admin,admin,
2720,142463,1749,35714,642,0,N,N,N,CP_Drtn,TT_Task,DT_FixedDUR2,TK_NotStart,BL1-FN-6F-1070,False Ceiling,4433,904,0,120,0,5710,5710,120,49075,0,49075,,,,2015-11-19 08:00,2015-12-03 16:00,,2015-07-29 08:00,2015-08-12 16:00,2015-07-29 08:00,2015-08-12 16:00,2015-07-29 08:00,2015-08-12 16:00,2015-11-19 08:00,2015-12-03 16:00,,PT_Normal,,,,,gBPRM+WDF0C4PawspbHzTA,pOW/2KKFQMKYzix3jiANUA,,,N,0,0,,,2014-04-05 12:28,2014-04-05 13:21,admin,admin,
2721,142464,1749,35714,642,0,N,N,N,CP_Drtn,TT_Task,DT_FixedDUR2,TK_NotStart,BL1-FN-6F-1080,Hand Rails for Stairs,4433,904,40,120,0,43,43,120,9498.792932,0,9498.792932,,,,2015-12-04 08:00,2015-12-18 16:00,,2015-08-13 08:00,2015-08-27 16:00,2015-08-13 08:00,2015-08-27 16:00,2015-08-13 08:00,2015-08-27 16:00,2015-12-04 08:00,2015-12-18 16:00,,PT_Normal,,,,,FFYmlJXcHEqK1AcV48QOrA,5ZA03V7CS0aKspHEW44EUw,,,N,0,0,,,2014-04-05 12:28,2014-04-05 13:21,admin,admin,
2722,142465,1749,35714,642,0,N,N,N,CP_Drtn,TT_Task,DT_FixedDUR2,TK_NotStart,BL1-FN-6F-1090,Doors Installation,,864,0,120,0,0,0,120,31780.061209,0,31780.061209,,,,2015-12-19 08:00,2016-01-02 16:00,,2015-09-02 08:00,2015-09-16 16:00,2015-09-02 08:00,2015-09-16 16:00,2015-09-02 08:00,2015-09-16 16:00,2015-12-19 08:00,2016-01-02 16:00,,PT_Normal,,,,,uXuEMMkRQ0ybIfKiSydpXg,+qXV583zQr26aLIbU31tzw,,,N,0,0,,,2014-04-05 12:28,2014-04-05 13:21,admin,admin,
2723,142466,1749,35914,642,0,N,N,N,CP_Drtn,TT_Task,DT_FixedDUR2,TK_NotStart,BL1-ST-7F-1000,Reinforcement for Verticals,4433,460,0,56,0,644.336623,644.336623,56,43086.301,0,43086.301,,,,2015-05-13 12:00,2015-05-21 12:00,,2015-03-08 08:00,2015-03-15 16:00,2015-03-08 08:00,2015-03-15 16:00,2015-03-08 08:00,2015-03-15 16:00,2015-05-13 12:00,2015-05-21 12:00,,PT_Normal,,,,,ry4fd5jT9k20Asd0EvlObQ,A3vh2HYfQby4uqA4Q1XkjQ,,,N,0,0,,,2014-04-05 12:28,2014-04-05 13:21,admin,admin,
2724,142467,1749,35914,642,0,N,N,N,CP_Drtn,TT_Task,DT_FixedDUR2,TK_NotStart,BL1-ST-7F-1020,FW for Verticals,4433,460,0,32,0,11779.231729,11779.231729,32,51789.8,0,51789.8,,,,2015-05-21 12:00,2015-05-26 12:00,,2015-03-16 08:00,2015-03-19 16:00,2015-03-16 08:00,2015-03-19 16:00,2015-03-16 08:00,2015-03-19 16:00,2015-05-21 12:00,2015-05-26 12:00,,PT_Normal,,,,,i4y652gZzUSB0F9kaf5/ZA,9b5rklzcRCaEqAtxEs91zQ,,,N,0,0,,,2014-04-05 12:28,2014-04-05 13:21,admin,admin,
2725,142468,1749,35914,642,0,N,N,N,CP_Drtn,TT_Task,DT_FixedDUR2,TK_NotStart,BL1-ST-7F-1030,Concrete Verticals,4433,460,0,8,0,1895.586537,1895.586537,8,31649,0,31649,,,,2015-05-26 12:00,2015-05-27 12:00,,2015-03-21 08:00,2015-03-21 16:00,2015-03-21 08:00,2015-03-21 16:00,2015-03-21 08:00,2015-03-21 16:00,2015-05-26 12:00,2015-05-27 12:00,,PT_Normal,,,,,KVNLWo2Kg0OWPmQs+IH1Ow,1y22YizsTL6Juxf726/Liw,,,N,0,0,,,2014-04-05 12:28,2014-04-05 13:21,admin,admin,
2726,142469,1749,35914,642,0,N,N,N,CP_Drtn,TT_Task,DT_FixedDUR2,TK_NotStart,BL1-ST-7F-1040,FW for Slab,4433,460,0,40,0,10142.812715,10142.812715,40,44597.48,0,44597.48,,,,2015-05-27 12:00,2015-06-02 12:00,,2015-03-22 08:00,2015-03-26 16:00,2015-03-22 08:00,2015-03-26 16:00,2015-03-22 08:00,2015-03-26 16:00,2015-05-27 12:00,2015-06-02 12:00,,PT_Normal,,,,,tTSU8+XR90uOVCvltfIIQw,A7V3XP70QVaC+yhHRUW5DA,,,N,0,0,,,2014-04-05 12:28,2014-04-05 13:21,admin,admin,
2727,142470,1749,35914,642,0,N,N,N,CP_Drtn,TT_Task,DT_FixedDUR2,TK_NotStart,BL1-ST-7F-1050,Reinforcement for Slab,4433,460,0,40,0,1189.256501,1189.256501,40,79516.76,0,79516.76,,,,2015-06-02 12:00,2015-06-07 12:00,,2015-03-28 08:00,2015-04-01 16:00,2015-03-28 08:00,2015-04-01 16:00,2015-03-28 08:00,2015-04-01 16:00,2015-06-02 12:00,2015-06-07 12:00,,PT_Normal,,,,,P08WkEk0lkKx9BhwdgqbwA,lS70RETPQluxQ6TaMK/m+g,,,N,0,0,,,2014-04-05 12:28,2014-04-05 13:21,admin,admin,
2728,142471,1749,35914,642,0,N,N,N,CP_Drtn,TT_Task,DT_FixedDUR2,TK_NotStart,BL1-ST-7F-1070,Concrete for Slab,4433,460,0,8,0,2921.401441,2921.401441,8,48726,0,48726,,,,2015-06-07 12:00,2015-06-08 12:00,,2015-04-02 08:00,2015-04-02 16:00,2015-04-02 08:00,2015-04-02 16:00,2015-04-02 08:00,2015-04-02 16:00,2015-06-07 12:00,2015-06-08 12:00,,PT_Normal,,,,,PNrBbvPOFU2bRhpUbu52Ag,pDOKVQ9tQUOuCSwus2xELQ,,,N,0,0,,,2014-04-05 12:28,2014-04-05 13:21,admin,admin,
2729,142472,1749,35914,642,0,N,N,N,CP_Drtn,TT_Task,DT_FixedDUR2,TK_NotStart,BL1-ST-7F-1010,MEP Works in Vertical Element,,492,32,40,0,160,160,40,1803.546829,0,1803.546829,,,,2015-05-20 12:00,2015-05-26 12:00,,2015-03-10 08:00,2015-03-15 16:00,2015-03-10 08:00,2015-03-15 16:00,2015-03-10 08:00,2015-03-15 16:00,2015-05-20 12:00,2015-05-26 12:00,,PT_Normal,,,,,d39Q1G3FVUaUSHoOkDIbvA,kDSNfKKeS6Sf1qy6VdYqpQ,,,N,0,0,,,2014-04-05 12:28,2014-04-05 13:21,admin,admin,
2730,142473,1749,35914,642,0,N,N,N,CP_Drtn,TT_Task,DT_FixedDUR2,TK_NotStart,BL1-ST-7F-1060,MEP Works in Slab & Beams,,460,0,40,0,320,320,40,3354.018234,0,3354.018234,,,,2015-06-02 12:00,2015-06-07 12:00,,2015-03-28 08:00,2015-04-01 16:00,2015-03-28 08:00,2015-04-01 16:00,2015-03-28 08:00,2015-04-01 16:00,2015-06-02 12:00,2015-06-07 12:00,,PT_Normal,,,,,XNix7iSecU2MwmxZ22GtOA,WazeoCyiSdu5VHkhVEiTzg,,,N,0,0,,,2014-04-05 12:28,2014-04-05 13:21,admin,admin,
2731,142474,1749,35914,644,0,N,N,N,CP_Drtn,TT_Task,DT_FixedDUR2,TK_NotStart,BL1-ST-7F-1080,Reinforcement for Staircase Verticals,,444,0,40,0,0,0,40,5,0,5,,,,2015-06-08 12:00,2015-06-14 12:00,,2015-04-04 08:00,2015-04-08 16:00,2015-04-04 08:00,2015-04-08 16:00,2015-04-04 08:00,2015-04-08 16:00,2015-06-08 12:00,2015-06-14 12:00,,PT_Normal,,,,,ywJsqhhTWk6mUxiaFunZ7Q,evuwn+njS0mLTQFtNalR2A,,,N,0,0,,,2014-04-05 12:28,2014-04-05 13:21,admin,admin,
2732,142475,1749,35914,644,0,N,N,N,CP_Drtn,TT_Task,DT_FixedDUR2,TK_NotStart,BL1-ST-7F-1110,FW for Staircase Verticals,,444,0,32,0,0,0,32,4,0,4,,,,2015-06-14 12:00,2015-06-18 12:00,,2015-04-09 08:00,2015-04-13 16:00,2015-04-09 08:00,2015-04-13 16:00,2015-04-09 08:00,2015-04-13 16:00,2015-06-14 12:00,2015-06-18 12:00,,PT_Normal,,,,,6acLVAGbIkyle0lDfdWWWw,3SfuB422606WRvxPUxKspA,,,N,0,0,,,2014-04-05 12:28,2014-04-05 13:21,admin,admin,
2733,142476,1749,35914,644,0,N,N,N,CP_Drtn,TT_Task,DT_FixedDUR2,TK_NotStart,BL1-ST-7F-1130,Concrete for Staircase Verticals,,444,0,8,0,0,0,8,1,0,1,,,,2015-06-18 12:00,2015-06-20 12:00,,2015-04-14 08:00,2015-04-14 16:00,2015-04-14 08:00,2015-04-14 16:00,2015-04-14 08:00,2015-04-14 16:00,2015-06-18 12:00,2015-06-20 12:00,,PT_Normal,,,,,GN2y11UVx0e8rm/sXkZQAQ,BfBNiaY7EE+R52YWvFGdBA,,,N,0,0,,,2014-04-05 12:28,2014-04-05 13:21,admin,admin,
2734,142477,1749,35914,644,0,N,N,N,CP_Drtn,TT_Task,DT_FixedDUR2,TK_NotStart,BL1-ST-7F-1140,FW for Staircase Slab,,444,0,24,0,0,0,24,3,0,3,,,,2015-06-20 12:00,2015-06-23 12:00,,2015-04-15 08:00,2015-04-18 16:00,2015-04-15 08:00,2015-04-18 16:00,2015-04-15 08:00,2015-04-18 16:00,2015-06-20 12:00,2015-06-23 12:00,,PT_Normal,,,,,7CemTOh9b0m0P9a56Iuy4A,ZHRiglvTJUuvNBW0EUCJFw,,,N,0,0,,,2014-04-05 12:28,2014-04-05 13:21,admin,admin,
2735,142478,1749,35914,644,0,N,N,N,CP_Drtn,TT_Task,DT_FixedDUR2,TK_NotStart,BL1-ST-7F-1150,Reinforcement for Staircase Slab,,444,0,24,0,0,0,24,3,0,3,,,,2015-06-23 12:00,2015-06-27 12:00,,2015-04-19 08:00,2015-04-21 16:00,2015-04-19 08:00,2015-04-21 16:00,2015-04-19 08:00,2015-04-21 16:00,2015-06-23 12:00,2015-06-27 12:00,,PT_Normal,,,,,Jtbx6QfG10qzJE2GSawoxw,Ll/HwWk260W6+h26Dfavug,,,N,0,0,,,2014-04-05 12:28,2014-04-05 13:21,admin,admin,
2736,142479,1749,35914,644,0,N,N,N,CP_Drtn,TT_Task,DT_FixedDUR2,TK_NotStart,BL1-ST-7F-1160,Concrete for Staircase Slab,,444,0,8,0,0,0,8,1,0,1,,,,2015-06-27 12:00,2015-06-28 12:00,,2015-04-22 08:00,2015-04-22 16:00,2015-04-22 08:00,2015-04-22 16:00,2015-04-22 08:00,2015-04-22 16:00,2015-06-27 12:00,2015-06-28 12:00,,PT_Normal,,,,,LW7mKVIzf0mcb+K4/BEdSQ,qJ0w/GyiAUyX8+rMY4NXcw,,,N,0,0,,,2014-04-05 12:28,2014-04-05 13:21,admin,admin,
2737,142480,1749,35914,644,0,N,N,N,CP_Drtn,TT_Task,DT_FixedDUR2,TK_NotStart,BL1-ST-7F-1100,Reinforcement for Parapet,,952,16,24,0,0,0,24,3,0,3,,,,2015-08-25 08:00,2015-08-27 16:00,,2015-04-07 08:00,2015-04-09 16:00,2015-04-07 08:00,2015-04-09 16:00,2015-04-07 08:00,2015-04-09 16:00,2015-08-25 08:00,2015-08-27 16:00,,PT_Normal,,,,,qdh02XdoYUifiTcpiwsimg,FgNm0Cru0kOmarqeCCu9Lw,,,N,0,0,,,2014-04-05 12:28,2014-04-05 13:21,admin,admin,
2738,142481,1749,35914,644,0,N,N,N,CP_Drtn,TT_Task,DT_FixedDUR2,TK_NotStart,BL1-ST-7F-1090,FW for Parapet,,936,0,64,0,0,0,64,8,0,8,,,,2015-08-19 08:00,2015-08-27 16:00,,2015-04-04 08:00,2015-04-12 16:00,2015-04-04 08:00,2015-04-12 16:00,2015-04-04 08:00,2015-04-12 16:00,2015-08-19 08:00,2015-08-27 16:00,,PT_Normal,,,,,q9XvHmqHbkyj6sxpV0GNEw,eCX4YBLs5Uq9jhxXodxWvQ,,,N,0,0,,,2014-04-05 12:28,2014-04-05 13:21,admin,admin,
2739,142482,1749,35914,644,0,N,N,N,CP_Drtn,TT_Task,DT_FixedDUR2,TK_NotStart,BL1-ST-7F-1120,Concrete for Parapet,,936,312,8,0,0,0,8,1,0,1,,,,2015-08-29 08:00,2015-08-29 16:00,,2015-04-13 08:00,2015-04-13 16:00,2015-04-13 08:00,2015-04-13 16:00,2015-04-13 08:00,2015-04-13 16:00,2015-08-29 08:00,2015-08-29 16:00,,PT_Normal,,,,,OHtuOIceKUe7JY611q5+Qw,UjX/DQcZFUmrpR+B1Lms9w,,,N,0,0,,,2014-04-05 12:28,2014-04-05 13:21,admin,admin,
2740,142483,1749,35893,642,0,N,N,N,CP_Drtn,TT_Task,DT_FixedDUR2,TK_NotStart,BL1-FN-7F-1000,Block Works,4433,484,0,144,0,2278.6,2278.6,144,30311.37977,0,30311.37977,,,,2015-07-12 12:00,2015-07-30 12:00,,2015-05-10 08:00,2015-05-30 16:00,2015-05-10 08:00,2015-05-30 16:00,2015-05-10 08:00,2015-05-30 16:00,2015-07-12 12:00,2015-07-30 12:00,,PT_Normal,,,,,SxX1D/uGEk21A2MSps6Ahw,W8Mqm8tsRQSNcQ4Vi0uhpw,,,N,0,0,,,2014-04-05 12:28,2014-04-05 13:21,admin,admin,
2741,142484,1749,35893,642,0,N,N,N,CP_Drtn,TT_Task,DT_FixedDUR2,TK_NotStart,BL1-FN-7F-1010,Plaster,4433,728,0,128,0,2960.7,2960.7,128,34813.955608,0,34813.955608,,,,2015-09-02 08:00,2015-09-17 16:00,,2015-06-03 08:00,2015-06-18 16:00,2015-06-03 08:00,2015-06-18 16:00,2015-06-03 08:00,2015-06-18 16:00,2015-09-02 08:00,2015-09-17 16:00,,PT_Normal,,,,,TR4Cd2Z5hEy7I7xGKpcgCw,83CVYlvuTfC6XUblZTSZgg,,,N,0,0,,,2014-04-05 12:28,2014-04-05 13:21,admin,admin,
2742,142485,1749,35893,642,0,N,N,N,CP_Drtn,TT_Task,DT_FixedDUR2,TK_NotStart,BL1-FN-7F-1020,Paint 1st Coat,4433,728,0,120,0,888.2,888.2,120,5600.276623,0,5600.276623,,,,2015-09-18 08:00,2015-10-02 16:00,,2015-06-19 08:00,2015-07-03 16:00,2015-06-19 08:00,2015-07-03 16:00,2015-06-19 08:00,2015-07-03 16:00,2015-09-18 08:00,2015-10-02 16:00,,PT_Normal,,,,,8fWpwqgrTkyz0PZPh50RBg,HiSpj1/dQ6iHwDk1GCYUkQ,,,N,0,0,,,2014-04-05 12:28,2014-04-05 13:21,admin,admin,
2743,142486,1749,35893,642,0,N,N,N,CP_Drtn,TT_Task,DT_FixedDUR2,TK_NotStart,BL1-FN-7F-1060,Flooring Works,4433,728,0,160,0,1506.04,1506.04,160,35116.582184,0,35116.582184,,,,2015-10-03 08:00,2015-10-22 16:00,,2015-07-04 08:00,2015-07-23 16:00,2015-07-04 08:00,2015-07-23 16:00,2015-07-04 08:00,2015-07-23 16:00,2015-10-03 08:00,2015-10-22 16:00,,PT_Normal,,,,,bAm4tj8/ZEKFQL8Lv1LgDw,XClWYFXxSZqeng8FiDT6Zw,,,N,0,0,,,2014-04-05 12:28,2014-04-05 13:21,admin,admin,
2744,142487,1749,35893,642,0,N,N,N,CP_Drtn,TT_Task,DT_FixedDUR2,TK_NotStart,BL1-FN-7F-1090,Final Paint,,1240,0,80,0,0,0,80,10,0,10,,,,2016-02-14 08:00,2016-02-23 16:00,,2015-09-12 08:00,2015-09-21 16:00,2015-09-12 08:00,2015-09-21 16:00,2015-09-12 08:00,2015-09-21 16:00,2016-02-14 08:00,2016-02-23 16:00,,PT_Normal,,,,,/lveM0Q7Kk2VZVgo0r6etA,0UvELxmcRv+Cr/SFrYH0hQ,,,N,0,0,,,2014-04-05 12:28,2014-04-05 13:21,admin,admin,
2745,142488,1749,35893,642,0,N,N,N,CP_Drtn,TT_Task,DT_FixedDUR2,TK_NotStart,BL1-FN-7F-1080,Hand Rails for Stairs,4433,1592,320,120,0,64.5,64.5,120,14240.689398,0,14240.689398,,,,2016-02-08 08:00,2016-02-22 16:00,,2015-07-24 08:00,2015-08-07 16:00,2015-07-24 08:00,2015-08-07 16:00,2015-07-24 08:00,2015-08-07 16:00,2016-02-08 08:00,2016-02-22 16:00,,PT_Normal,,,,,zvFFdPZjw02Ph6EPuvAT2Q,ZGgQ7ieKSeSQOMtvL9cjGg,,,N,0,0,,,2014-04-05 12:28,2014-04-05 13:21,admin,admin,
2746,142489,1749,35893,642,0,N,N,N,CP_Drtn,TT_Task,DT_FixedDUR2,TK_NotStart,BL1-FN-7F-1100,Doors Installation,,1272,1272,120,0,0,0,120,31780.061209,0,31780.061209,,,,2016-02-23 08:00,2016-03-08 16:00,,2015-09-17 08:00,2015-10-01 16:00,2015-09-17 08:00,2015-10-01 16:00,2015-09-17 08:00,2015-10-01 16:00,2016-02-23 08:00,2016-03-08 16:00,,PT_Normal,,,,,F1dIImc1v0GnS3GlB6C/LA,rpXkmxzzRbGWtwLwPy6RmQ,,,N,0,0,,,2014-04-05 12:28,2014-04-05 13:21,admin,admin,
2747,142490,1749,35702,642,0,N,N,N,CP_Drtn,TT_Task,DT_FixedDUR2,TK_NotStart,BL2-ST-B2-1020,Formwork,4433,0,0,80,0,4068.11596,4068.11596,80,17894.9476,0,17894.9476,,,,2014-04-22 08:00,2014-05-04 16:00,,2014-04-22 08:00,2014-05-04 16:00,2014-04-22 08:00,2014-05-04 16:00,2014-04-22 08:00,2014-05-04 16:00,2014-04-22 08:00,2014-05-04 16:00,,PT_Normal,,,,,aGXzSAogZ0ew2pHw1srBYA,8ptHFEvcTJKm22K73deegw,,,Y,0,0,,,2014-04-05 12:28,2014-04-05 13:21,admin,admin,
2748,142491,1749,35702,642,0,N,N,N,CP_Drtn,TT_Task,DT_FixedDUR2,TK_NotStart,BL2-ST-B2-1010,Waterproofing,4433,0,0,96,0,629.939907,629.939907,96,92,0,92,,,,2014-04-08 08:00,2014-04-21 16:00,,2014-04-08 08:00,2014-04-21 16:00,2014-04-08 08:00,2014-04-21 16:00,2014-04-08 08:00,2014-04-21 16:00,2014-04-08 08:00,2014-04-21 16:00,,PT_Normal,,,,,EOZ429XVMU6hBOqlnaT0Pg,/sAhj4HbS5Sa1jJ0SoIadg,,,Y,0,0,,,2014-04-05 12:28,2014-04-05 13:21,admin,admin,
2749,142492,1749,35702,642,0,N,N,N,CP_Drtn,TT_Task,DT_FixedDUR2,TK_NotStart,BL2-ST-B2-1030,Reinforcement,4433,0,0,168,0,3429.96682,3429.96682,168,229342.26,0,229342.26,,,,2014-05-05 08:00,2014-05-28 16:00,,2014-05-05 08:00,2014-05-28 16:00,2014-05-05 08:00,2014-05-28 16:00,2014-05-05 08:00,2014-05-28 16:00,2014-05-05 08:00,2014-05-28 16:00,,PT_Normal,,,,,yDHrKQsDWk6pCNM3TCHcAg,dgRB8GbhQ/isrBuLOB0zTA,,,Y,0,0,,,2014-04-05 12:28,2014-04-05 13:21,admin,admin,
2750,142493,1749,35702,642,0,N,N,N,CP_Drtn,TT_Task,DT_FixedDUR2,TK_NotStart,BL2-ST-B2-1060,Concrete,4433,0,0,8,0,19314.764894,19314.764894,8,322098.1459,0,322098.1459,,,,2014-05-29 08:00,2014-05-29 16:00,,2014-05-29 08:00,2014-05-29 16:00,2014-05-29 08:00,2014-05-29 16:00,2014-05-29 08:00,2014-05-29 16:00,2014-05-29 08:00,2014-05-29 16:00,,PT_Normal,,,,,fWDyFGqiKEyP43C2ByEUCQ,2VPAzK4iRCG0UN+REU78Yg,,,Y,0,0,,,2014-04-05 12:28,2014-04-05 13:21,admin,admin,
2751,142494,1749,35702,642,0,N,N,N,CP_Drtn,TT_Task,DT_FixedDUR2,TK_NotStart,BL2-ST-B2-1000,Blinding,,0,0,40,0,0,0,40,5,0,5,,,,2014-04-02 08:00,2014-04-07 16:00,,2014-04-02 08:00,2014-04-07 16:00,2014-04-02 08:00,2014-04-07 16:00,2014-04-02 08:00,2014-04-07 16:00,2014-04-02 08:00,2014-04-07 16:00,,PT_Normal,,,,,+UmUjrY1U0CpzRQS00G5sQ,iSrSS2bFR9OHRTI8mkwZEg,,,Y,0,0,,,2014-04-05 12:28,2014-04-05 13:21,admin,admin,
2752,142495,1749,35702,642,0,N,N,N,CP_Drtn,TT_Task,DT_FixedDUR2,TK_NotStart,BL2-ST-B2-1040,MEP Works in Raft,4456,0,0,40,0,312,312,40,13056.000019,0,13056.000019,,,,2014-05-24 08:00,2014-05-28 16:00,,2014-05-24 08:00,2014-05-28 16:00,2014-05-24 08:00,2014-05-28 16:00,2014-05-24 08:00,2014-05-28 16:00,2014-05-24 08:00,2014-05-28 16:00,,PT_Normal,,,,,sWNVCzSCHE2q1/7IIowpzA,b9Esm0r4ShWDAbSbXbEO6A,,,Y,0,0,,,2014-04-05 12:28,2014-04-05 13:21,admin,admin,
2753,142496,1749,35702,642,0,N,N,N,CP_Drtn,TT_Task,DT_FixedDUR2,TK_NotStart,BL2-ST-B2-1050,Earthing Works,4480,0,0,40,0,408,408,40,8367.291801,0,8367.291801,,,,2014-05-24 08:00,2014-05-28 16:00,,2014-05-24 08:00,2014-05-28 16:00,2014-05-24 08:00,2014-05-28 16:00,2014-05-24 08:00,2014-05-28 16:00,2014-05-24 08:00,2014-05-28 16:00,,PT_Normal,,,,,5NnSpvtQyEq6yEGg8Xwe0g,JtKzMmIQS5O0wwGdTNgFPA,,,Y,0,0,,,2014-04-05 12:28,2014-04-05 13:21,admin,admin,
2754,142497,1749,35739,642,0,N,N,N,CP_Drtn,TT_Task,DT_FixedDUR2,TK_NotStart,BL2-FN-B2-1000,Block Works,4433,568,0,168,0,574.5,574.5,168,7658.840379,0,7658.840379,,,,2014-12-21 08:00,2015-01-15 16:00,,2014-09-21 08:00,2014-10-19 16:00,2014-09-21 08:00,2014-10-19 16:00,2014-09-21 08:00,2014-10-19 16:00,2014-12-21 08:00,2015-01-15 16:00,,PT_Normal,,,,,tj3Beh1e3EOdfFMZD7uLPQ,33Z5IG/GRACIrBnzvVzv4A,,,N,0,0,,,2014-04-05 12:28,2014-04-05 13:21,admin,admin,
2755,142498,1749,35739,642,0,N,N,N,CP_Drtn,TT_Task,DT_FixedDUR2,TK_NotStart,BL2-FN-B2-1010,Plaster,4433,600,0,152,0,591,591,152,6964.7493,0,6964.7493,,,,2015-02-18 08:00,2015-03-11 16:00,,2014-11-20 08:00,2014-12-11 16:00,2014-11-20 08:00,2014-12-11 16:00,2014-11-20 08:00,2014-12-11 16:00,2015-02-18 08:00,2015-03-11 16:00,,PT_Normal,,,,,F4a16TKxME+ec5VG57+vWg,tpEoNudYTuG1n0z/53t/PQ,,,N,0,0,,,2014-04-05 12:28,2014-04-05 13:21,admin,admin,
2756,142499,1749,35739,642,0,N,N,N,CP_Drtn,TT_Task,DT_FixedDUR2,TK_NotStart,BL2-FN-B2-1020,Paint 1st Coat,4433,896,0,120,0,121.5,121.5,120,748.131064,0,748.131064,,,,2015-04-26 08:00,2015-05-12 16:00,,2014-12-14 08:00,2014-12-30 16:00,2014-12-14 08:00,2014-12-30 16:00,2014-12-14 08:00,2014-12-30 16:00,2015-04-26 08:00,2015-05-12 16:00,,PT_Normal,,,,,eYp5ZNYGd0e7r2vfGgKcpA,TTKLLDpLRO2rdCC+BhAfFQ,,,N,0,0,,,2014-04-05 12:28,2014-04-05 13:21,admin,admin,
2757,142500,1749,35739,642,0,N,N,N,CP_Drtn,TT_Task,DT_FixedDUR2,TK_NotStart,BL2-FN-B2-1030,Ceiling Paint,4433,896,0,80,0,19.8,19.8,80,129.450629,0,129.450629,,,,2015-05-07 08:00,2015-05-18 16:00,,2014-12-25 08:00,2015-01-07 16:00,2014-12-25 08:00,2015-01-07 16:00,2014-12-25 08:00,2015-01-07 16:00,2015-05-07 08:00,2015-05-18 16:00,,PT_Normal,,,,,rDEivSlhYESfCHtqDpEGRQ,oRkyOK7IS8WTQM/OBgBwYg,,,N,0,0,,,2014-04-05 12:28,2014-04-05 13:21,admin,admin,
2758,142501,1749,35739,642,0,N,N,N,CP_Drtn,TT_Task,DT_FixedDUR2,TK_NotStart,BL2-FN-B2-1040,Waterproofing,4433,896,0,40,0,3.3,3.3,40,69.704307,0,69.704307,,,,2015-05-19 08:00,2015-05-24 16:00,,2015-01-08 08:00,2015-01-13 16:00,2015-01-08 08:00,2015-01-13 16:00,2015-01-08 08:00,2015-01-13 16:00,2015-05-19 08:00,2015-05-24 16:00,,PT_Normal,,,,,MEsBUUdTJU6Xynw9CG8nKw,HIX0OTQKRmeKDLfNXWwT3g,,,N,0,0,,,2014-04-05 12:28,2014-04-05 13:21,admin,admin,
2759,142502,1749,35739,642,0,N,N,N,CP_Drtn,TT_Task,DT_FixedDUR2,TK_NotStart,BL2-FN-B2-1060,Flooring Works,4433,896,0,160,0,144.5,144.5,160,3387.875514,0,3387.875514,,,,2015-05-25 08:00,2015-06-14 16:00,,2015-01-14 08:00,2015-02-05 16:00,2015-01-14 08:00,2015-02-05 16:00,2015-01-14 08:00,2015-02-05 16:00,2015-05-25 08:00,2015-06-14 16:00,,PT_Normal,,,,,pk6dDAEn8EK9yKMTvYYjSA,WB6C/6g5TL63oC28e9M3xw,,,N,0,0,,,2014-04-05 12:28,2014-04-05 13:21,admin,admin,
2760,142503,1749,35739,642,0,N,N,N,CP_Drtn,TT_Task,DT_FixedDUR2,TK_NotStart,BL2-FN-B2-1100,Final Paint,,1040,0,80,0,0,0,80,10,0,10,,,,2016-01-09 08:00,2016-01-18 16:00,,2015-09-01 08:00,2015-09-10 16:00,2015-09-01 08:00,2015-09-10 16:00,2015-09-01 08:00,2015-09-10 16:00,2016-01-09 08:00,2016-01-18 16:00,,PT_Normal,,,,,+TBNEeHFRk2GB4taUIGB8A,yUhFnFK+R7CbpRsXmSzhEQ,,,N,0,0,,,2014-04-05 12:28,2014-04-05 13:21,admin,admin,
2761,142504,1749,35739,642,0,N,N,N,CP_Drtn,TT_Task,DT_FixedDUR2,TK_NotStart,BL2-FN-B2-1050,Wall Tiling,4433,1040,144,80,0,620,620,80,2760.977363,0,2760.977363,,,,2015-06-08 08:00,2015-06-17 16:00,,2015-01-08 08:00,2015-01-19 16:00,2015-01-08 08:00,2015-01-19 16:00,2015-01-08 08:00,2015-01-19 16:00,2015-06-08 08:00,2015-06-17 16:00,,PT_Normal,,,,,UfkrCAYUwkySwmpM2vlRcA,/3v/wDDqRvyHYYsV0YBPZg,,,N,0,0,,,2014-04-05 12:28,2014-04-05 13:21,admin,admin,
2762,142505,1749,35739,642,0,N,N,N,CP_Drtn,TT_Task,DT_FixedDUR2,TK_NotStart,BL2-FN-B2-1070,False Ceiling,4433,896,0,120,0,240,240,120,2028.725365,0,2028.725365,,,,2015-06-18 08:00,2015-07-02 16:00,,2015-02-10 08:00,2015-02-26 16:00,2015-02-10 08:00,2015-02-26 16:00,2015-02-10 08:00,2015-02-26 16:00,2015-06-18 08:00,2015-07-02 16:00,,PT_Normal,,,,,Yj6rqz9fhkqc9rOk43eycg,Ah3ALgeoSMeyIwYmO2bmow,,,N,0,0,,,2014-04-05 12:28,2014-04-05 13:21,admin,admin,
2763,142506,1749,35739,642,0,N,N,N,CP_Drtn,TT_Task,DT_FixedDUR2,TK_NotStart,BL2-FN-B2-1080,Hand Rails for Stairs,4433,896,0,120,0,43,43,120,9498.792932,0,9498.792932,,,,2015-07-03 08:00,2015-07-17 16:00,,2015-02-28 08:00,2015-03-16 16:00,2015-02-28 08:00,2015-03-16 16:00,2015-02-28 08:00,2015-03-16 16:00,2015-07-03 08:00,2015-07-17 16:00,,PT_Normal,,,,,nKaCgGHEEU2G5jU8qvv0bQ,dzaqOu57SAKfBfBmGD+W6g,,,N,0,0,,,2014-04-05 12:28,2014-04-05 13:21,admin,admin,
2764,142507,1749,35739,642,0,N,N,N,CP_Drtn,TT_Task,DT_FixedDUR2,TK_NotStart,BL2-FN-B2-1090,Doors Installation,,896,0,120,0,0,0,120,26005.108727,0,26005.108727,,,,2015-07-18 08:00,2015-08-01 16:00,,2015-03-17 08:00,2015-04-02 16:00,2015-03-17 08:00,2015-04-02 16:00,2015-03-17 08:00,2015-04-02 16:00,2015-07-18 08:00,2015-08-01 16:00,,PT_Normal,,,,,4/q1+A9kDkumvg9RkAj13g,8EcXKsYbSrCtopnkWHCdKw,,,N,0,0,,,2014-04-05 12:28,2014-04-05 13:21,admin,admin,
2765,142508,1749,35737,642,0,N,N,N,CP_Drtn,TT_Task,DT_FixedDUR2,TK_NotStart,BL2-ST-B1-1000,Reinforcement for Verticals,4433,192,0,96,0,946.624828,946.624828,96,63301.8,0,63301.8,,,,2014-06-29 08:00,2014-07-20 14:00,,2014-05-31 08:00,2014-06-12 16:00,2014-05-31 08:00,2014-06-12 16:00,2014-05-31 08:00,2014-06-12 16:00,2014-06-29 08:00,2014-07-20 14:00,,PT_Normal,,,,,1UsXpmgpA02kv95P2SxlRw,pquJLvdcSEyOB0VlI42xDQ,,,N,0,0,,,2014-04-05 12:28,2014-04-05 13:21,admin,admin,
2766,142509,1749,35737,642,0,N,N,N,CP_Drtn,TT_Task,DT_FixedDUR2,TK_NotStart,BL2-ST-B1-1020,FW for Verticals,4433,192,0,64,0,7525.695654,7525.695654,64,33094.25,0,33094.25,,,,2014-07-21 10:00,2014-08-04 16:00,,2014-06-14 08:00,2014-06-23 16:00,2014-06-14 08:00,2014-06-23 16:00,2014-06-14 08:00,2014-06-23 16:00,2014-07-21 10:00,2014-08-04 16:00,,PT_Normal,,,,,YL6ofH2s20KnklS0X8bOQQ,jhiQNSxaSHiHNoHVjRCGPQ,,,N,0,0,,,2014-04-05 12:28,2014-04-05 13:21,admin,admin,
2767,142510,1749,35737,642,0,N,N,N,CP_Drtn,TT_Task,DT_FixedDUR2,TK_NotStart,BL2-ST-B1-1030,Concrete Verticals,4433,192,0,8,0,1407.103249,1407.103249,8,23466.1,0,23466.1,,,,2014-08-05 08:00,2014-08-05 16:00,,2014-06-24 08:00,2014-06-24 16:00,2014-06-24 08:00,2014-06-24 16:00,2014-06-24 08:00,2014-06-24 16:00,2014-08-05 08:00,2014-08-05 16:00,,PT_Normal,,,,,PqUWxpn1h0upmSTBc2uGYw,HAF8EolLRC6BzbxGesXB0w,,,N,0,0,,,2014-04-05 12:28,2014-04-05 13:21,admin,admin,
2768,142511,1749,35737,642,0,N,N,N,CP_Drtn,TT_Task,DT_FixedDUR2,TK_NotStart,BL2-ST-B1-1040,FW for Slab,4433,192,0,80,0,9905.586233,9905.586233,80,43559.29,0,43559.29,,,,2014-08-06 08:00,2014-08-17 16:00,,2014-06-25 08:00,2014-07-10 14:00,2014-06-25 08:00,2014-07-10 14:00,2014-06-25 08:00,2014-07-10 14:00,2014-08-06 08:00,2014-08-17 16:00,,PT_Normal,,,,,fk4AOueZdE+oxpOFZBkdwg,Kcmjl4mRTPONmea7agOMCQ,,,N,0,0,,,2014-04-05 12:28,2014-04-05 13:21,admin,admin,
2769,142512,1749,35737,642,0,N,N,N,CP_Drtn,TT_Task,DT_FixedDUR2,TK_NotStart,BL2-ST-B1-1050,Reinforcement for Slab,4433,192,0,80,0,949.94169,949.94169,80,63521.56,0,63521.56,,,,2014-08-18 08:00,2014-08-28 16:00,,2014-07-11 10:00,2014-07-31 16:00,2014-07-11 10:00,2014-07-31 16:00,2014-07-11 10:00,2014-07-31 16:00,2014-08-18 08:00,2014-08-28 16:00,,PT_Normal,,,,,vjO9YOuBwkOEiJcfndiusw,vEaJvYT2TRKI8ctkH38SWA,,,N,0,0,,,2014-04-05 12:28,2014-04-05 13:21,admin,admin,
2770,142513,1749,35737,642,0,N,N,N,CP_Drtn,TT_Task,DT_FixedDUR2,TK_NotStart,BL2-ST-B1-1070,Concrete for Slab,4433,192,0,8,0,2789.375264,2789.375264,8,46517.11,0,46517.11,,,,2014-08-30 08:00,2014-08-30 16:00,,2014-08-02 08:00,2014-08-02 16:00,2014-08-02 08:00,2014-08-02 16:00,2014-08-02 08:00,2014-08-02 16:00,2014-08-30 08:00,2014-08-30 16:00,,PT_Normal,,,,,KD2huuiwpkKvfFspGF+Rqg,1lbu/lF6QxKgLhRdsRj8OA,,,N,0,0,,,2014-04-05 12:28,2014-04-05 13:21,admin,admin,
2771,142514,1749,35737,642,0,N,N,N,CP_Drtn,TT_Task,DT_FixedDUR2,TK_NotStart,BL2-ST-B1-1010,MEP Works in Vertical Element,,256,64,40,0,160,160,40,1803.546829,0,1803.546829,,,,2014-07-27 10:00,2014-08-04 16:00,,2014-06-08 08:00,2014-06-12 16:00,2014-06-08 08:00,2014-06-12 16:00,2014-06-08 08:00,2014-06-12 16:00,2014-07-27 10:00,2014-08-04 16:00,,PT_Normal,,,,,pDtKuz4RY0qX6QJXR1Rn7w,lXWNbpgMQImpXZWB9kSYVQ,,,N,0,0,,,2014-04-05 12:28,2014-04-05 13:21,admin,admin,
2772,142515,1749,35737,642,0,N,N,N,CP_Drtn,TT_Task,DT_FixedDUR2,TK_NotStart,BL2-ST-B1-1060,MEP Works in Slab & Beams,,192,0,40,0,320,320,40,3354.018234,0,3354.018234,,,,2014-08-24 08:00,2014-08-28 16:00,,2014-07-21 10:00,2014-07-31 16:00,2014-07-21 10:00,2014-07-31 16:00,2014-07-21 10:00,2014-07-31 16:00,2014-08-24 08:00,2014-08-28 16:00,,PT_Normal,,,,,hgYR2VmqCUKft1QUNt6kyg,U8xnZ4ITS8+aDABAEFAixw,,,N,0,0,,,2014-04-05 12:28,2014-04-05 13:21,admin,admin,
2773,142516,1749,35890,642,0,N,N,N,CP_Drtn,TT_Task,DT_FixedDUR2,TK_NotStart,BL2-FN-B1-1000,Block Works,4433,472,0,168,0,574.5,574.5,168,7658.840379,0,7658.840379,,,,2015-01-20 08:00,2015-02-12 16:00,,2014-11-10 08:00,2014-12-03 16:00,2014-11-10 08:00,2014-12-03 16:00,2014-11-10 08:00,2014-12-03 16:00,2015-01-20 08:00,2015-02-12 16:00,,PT_Normal,,,,,Tp6tIOqZe0qJcfpU+x9p2A,bSNbN0WLRkmvIEpCj7qNMA,,,N,0,0,,,2014-04-05 12:28,2014-04-05 13:21,admin,admin,
2774,142517,1749,35890,642,0,N,N,N,CP_Drtn,TT_Task,DT_FixedDUR2,TK_NotStart,BL2-FN-B1-1010,Plaster,4433,496,0,152,0,738.9,738.9,152,8703.331769,0,8703.331769,,,,2015-03-15 08:00,2015-04-05 16:00,,2014-12-30 08:00,2015-01-22 16:00,2014-12-30 08:00,2015-01-22 16:00,2014-12-30 08:00,2015-01-22 16:00,2015-03-15 08:00,2015-04-05 16:00,,PT_Normal,,,,,5AZ69E/ypU6Llm7i0fD4tA,WX2BNxaiSpiqMgpTlvm/5g,,,N,0,0,,,2014-04-05 12:28,2014-04-05 13:21,admin,admin,
2775,142518,1749,35890,642,0,N,N,N,CP_Drtn,TT_Task,DT_FixedDUR2,TK_NotStart,BL2-FN-B1-1020,Paint 1st Coat,4433,752,0,120,0,151.8,151.8,120,931.427943,0,931.427943,,,,2015-05-13 08:00,2015-05-30 16:00,,2015-01-24 08:00,2015-02-09 16:00,2015-01-24 08:00,2015-02-09 16:00,2015-01-24 08:00,2015-02-09 16:00,2015-05-13 08:00,2015-05-30 16:00,,PT_Normal,,,,,K4+ZvvT4SkuQw79jXFpAfw,ULEfNp3zTkWDukiWpy5dsQ,,,N,0,0,,,2014-04-05 12:28,2014-04-05 13:21,admin,admin,
2776,142519,1749,35890,642,0,N,N,N,CP_Drtn,TT_Task,DT_FixedDUR2,TK_NotStart,BL2-FN-B1-1030,Ceiling Paint,4433,752,0,80,0,39.6,39.6,80,248.94642,0,248.94642,,,,2015-05-25 08:00,2015-06-04 16:00,,2015-02-04 08:00,2015-02-15 16:00,2015-02-04 08:00,2015-02-15 16:00,2015-02-04 08:00,2015-02-15 16:00,2015-05-25 08:00,2015-06-04 16:00,,PT_Normal,,,,,UKwoYPhMGEuV+IAWGcj+JA,SKu/9EFIRZ2sEdqE/w9kXw,,,N,0,0,,,2014-04-05 12:28,2014-04-05 13:21,admin,admin,
2777,142520,1749,35890,642,0,N,N,N,CP_Drtn,TT_Task,DT_FixedDUR2,TK_NotStart,BL2-FN-B1-1040,Waterproofing,4433,752,0,40,0,3.3,3.3,40,69.35431,0,69.35431,,,,2015-06-05 08:00,2015-06-09 16:00,,2015-02-16 08:00,2015-02-21 16:00,2015-02-16 08:00,2015-02-21 16:00,2015-02-16 08:00,2015-02-21 16:00,2015-06-05 08:00,2015-06-09 16:00,,PT_Normal,,,,,MnzWn1/xe0aIElncTfxA1g,+s350U4VQraJx+91pmAnpw,,,N,0,0,,,2014-04-05 12:28,2014-04-05 13:21,admin,admin,
2778,142521,1749,35890,642,0,N,N,N,CP_Drtn,TT_Task,DT_FixedDUR2,TK_NotStart,BL2-FN-B1-1060,Flooring Works,4433,752,0,160,0,818,818,160,19081.746381,0,19081.746381,,,,2015-06-10 08:00,2015-06-29 16:00,,2015-02-22 08:00,2015-03-16 16:00,2015-02-22 08:00,2015-03-16 16:00,2015-02-22 08:00,2015-03-16 16:00,2015-06-10 08:00,2015-06-29 16:00,,PT_Normal,,,,,2AsLE9FS102YhTyVUCf9tg,Bj8xrEgHSpmIqG9+HUF4kQ,,,N,0,0,,,2014-04-05 12:28,2014-04-05 13:21,admin,admin,
2779,142522,1749,35890,642,0,N,N,N,CP_Drtn,TT_Task,DT_FixedDUR2,TK_NotStart,BL2-FN-B1-1100,Final Paint,,1040,0,80,0,0,0,80,10,0,10,,,,2016-01-15 08:00,2016-01-24 16:00,,2015-09-07 08:00,2015-09-16 16:00,2015-09-07 08:00,2015-09-16 16:00,2015-09-07 08:00,2015-09-16 16:00,2016-01-15 08:00,2016-01-24 16:00,,PT_Normal,,,,,yG1h0qmQkUyztBvRtlMgBw,J7sJDZnwSy+2w0N7yegrmw,,,N,0,0,,,2014-04-05 12:28,2014-04-05 13:21,admin,admin,
2780,142523,1749,35890,642,0,N,N,N,CP_Drtn,TT_Task,DT_FixedDUR2,TK_NotStart,BL2-FN-B1-1050,Wall Tiling,4433,896,144,80,0,776,776,80,3453.520054,0,3453.520054,,,,2015-06-23 08:00,2015-07-02 16:00,,2015-02-16 08:00,2015-02-26 16:00,2015-02-16 08:00,2015-02-26 16:00,2015-02-16 08:00,2015-02-26 16:00,2015-06-23 08:00,2015-07-02 16:00,,PT_Normal,,,,,C+hV+8zRMEGpaKK++vW9yQ,ZrgiKeLrTEGEkObvZsqQaA,,,N,0,0,,,2014-04-05 12:28,2014-04-05 13:21,admin,admin,
2781,142524,1749,35890,642,0,N,N,N,CP_Drtn,TT_Task,DT_FixedDUR2,TK_NotStart,BL2-FN-B1-1070,False Ceiling,4433,752,0,120,0,240,240,120,2028.815688,0,2028.815688,,,,2015-07-03 08:00,2015-07-17 16:00,,2015-03-21 08:00,2015-04-06 16:00,2015-03-21 08:00,2015-04-06 16:00,2015-03-21 08:00,2015-04-06 16:00,2015-07-03 08:00,2015-07-17 16:00,,PT_Normal,,,,,bK3zp0A28UaFHVj7dS9Ydg,4Xoq/9x3RVugRiG5k3vdrA,,,N,0,0,,,2014-04-05 12:28,2014-04-05 13:21,admin,admin,
2782,142525,1749,35890,642,0,N,N,N,CP_Drtn,TT_Task,DT_FixedDUR2,TK_NotStart,BL2-FN-B1-1080,Hand Rails for Stairs,4433,752,0,120,0,43,43,120,9498.792932,0,9498.792932,,,,2015-07-18 08:00,2015-08-01 16:00,,2015-04-07 08:00,2015-04-23 16:00,2015-04-07 08:00,2015-04-23 16:00,2015-04-07 08:00,2015-04-23 16:00,2015-07-18 08:00,2015-08-01 16:00,,PT_Normal,,,,,mozo+agLh02VcShwItPe1A,oTAUnt2xTuKRgJBfee5qog,,,N,0,0,,,2014-04-05 12:28,2014-04-05 13:21,admin,admin,
2783,142526,1749,35890,642,0,N,N,N,CP_Drtn,TT_Task,DT_FixedDUR2,TK_NotStart,BL2-FN-B1-1090,Doors Installation,,752,0,120,0,0,0,120,26005.108727,0,26005.108727,,,,2015-08-02 08:00,2015-08-16 16:00,,2015-04-25 08:00,2015-05-11 16:00,2015-04-25 08:00,2015-05-11 16:00,2015-04-25 08:00,2015-05-11 16:00,2015-08-02 08:00,2015-08-16 16:00,,PT_Normal,,,,,onxLVOMIBE+lwogQ0gZY0w,IzRV/7wOQXe+9fTYfYpiAA,,,N,0,0,,,2014-04-05 12:28,2014-04-05 13:21,admin,admin,
2784,142527,1749,35727,642,0,N,N,N,CP_Drtn,TT_Task,DT_FixedDUR2,TK_NotStart,BL2-ST-GF-1000,Reinforcement for Verticals,4433,192,0,96,0,946.624828,946.624828,96,63301.8,0,63301.8,,,,2014-08-31 08:00,2014-09-13 16:00,,2014-08-03 08:00,2014-08-16 16:00,2014-08-03 08:00,2014-08-16 16:00,2014-08-03 08:00,2014-08-16 16:00,2014-08-31 08:00,2014-09-13 16:00,,PT_Normal,,,,,IbXQscy6LUCb75QZZatVqQ,N/N6jXhzQseV7A1YYLuNSw,,,N,0,0,,,2014-04-05 12:28,2014-04-05 13:21,admin,admin,
2785,142528,1749,35727,642,0,N,N,N,CP_Drtn,TT_Task,DT_FixedDUR2,TK_NotStart,BL2-ST-GF-1020,FW for Verticals,4433,192,0,64,0,9363.736147,9363.736147,64,41175.08,0,41175.08,,,,2014-09-14 08:00,2014-09-22 16:00,,2014-08-17 08:00,2014-08-25 16:00,2014-08-17 08:00,2014-08-25 16:00,2014-08-17 08:00,2014-08-25 16:00,2014-09-14 08:00,2014-09-22 16:00,,PT_Normal,,,,,pt8Nlf8KwUaa0lq0jblmoQ,VOp2dEDZSXO4GgUY+xiHDA,,,N,0,0,,,2014-04-05 12:28,2014-04-05 13:21,admin,admin,
2786,142529,1749,35727,642,0,N,N,N,CP_Drtn,TT_Task,DT_FixedDUR2,TK_NotStart,BL2-ST-GF-1030,Concrete Verticals,4433,192,0,8,0,1750.436442,1750.436442,8,29191.5844,0,29191.5844,,,,2014-09-23 08:00,2014-09-23 16:00,,2014-08-26 08:00,2014-08-26 16:00,2014-08-26 08:00,2014-08-26 16:00,2014-08-26 08:00,2014-08-26 16:00,2014-09-23 08:00,2014-09-23 16:00,,PT_Normal,,,,,ThBoSaI2nk+s6tKSHah4zA,aNq09uyxQ26j6G/Vy1AgGA,,,N,0,0,,,2014-04-05 12:28,2014-04-05 13:21,admin,admin,
2787,142530,1749,35727,642,0,N,N,N,CP_Drtn,TT_Task,DT_FixedDUR2,TK_NotStart,BL2-ST-GF-1040,FW for Slab,4433,192,0,80,0,9094.581855,9094.581855,80,39993.76,0,39993.76,,,,2014-09-24 08:00,2014-10-09 14:00,,2014-08-27 08:00,2014-09-07 16:00,2014-08-27 08:00,2014-09-07 16:00,2014-08-27 08:00,2014-09-07 16:00,2014-09-24 08:00,2014-10-09 14:00,,PT_Normal,,,,,s6ZENZPPCkuuVWe+6igryQ,ehGLDEG3Q16JMVVm4uMA/Q,,,N,0,0,,,2014-04-05 12:28,2014-04-05 13:21,admin,admin,
2788,142531,1749,35727,642,0,N,N,N,CP_Drtn,TT_Task,DT_FixedDUR2,TK_NotStart,BL2-ST-GF-1050,Reinforcement for Slab,4433,192,0,80,0,949.94169,949.94169,80,63521.56,0,63521.56,,,,2014-10-11 08:00,2014-10-21 16:00,,2014-09-08 08:00,2014-09-18 16:00,2014-09-08 08:00,2014-09-18 16:00,2014-09-08 08:00,2014-09-18 16:00,2014-10-11 08:00,2014-10-21 16:00,,PT_Normal,,,,,ws3K0dmZpE6zKIg9L+HpXQ,eDeUx699R9O5fDpLLB1aaA,,,N,0,0,,,2014-04-05 12:28,2014-04-05 13:21,admin,admin,
2789,142532,1749,35727,642,0,N,N,N,CP_Drtn,TT_Task,DT_FixedDUR2,TK_NotStart,BL2-ST-GF-1070,Concrete for Slab,4433,192,0,8,0,2785.816121,2785.816121,8,46457.7571,0,46457.7571,,,,2014-10-22 08:00,2014-10-22 16:00,,2014-09-20 08:00,2014-09-20 16:00,2014-09-20 08:00,2014-09-20 16:00,2014-09-20 08:00,2014-09-20 16:00,2014-10-22 08:00,2014-10-22 16:00,,PT_Normal,,,,,afNMZF96LUCRXGZfJw6WzQ,AnvIYfWrRdmGNWJ/8ewv5Q,,,N,0,0,,,2014-04-05 12:28,2014-04-05 13:21,admin,admin,
2790,142533,1749,35727,642,0,N,N,N,CP_Drtn,TT_Task,DT_FixedDUR2,TK_NotStart,BL2-ST-GF-1010,MEP Works in Vertical Element,,256,64,40,0,160,160,40,1803.546829,0,1803.546829,,,,2014-09-17 08:00,2014-09-22 16:00,,2014-08-11 08:00,2014-08-16 16:00,2014-08-11 08:00,2014-08-16 16:00,2014-08-11 08:00,2014-08-16 16:00,2014-09-17 08:00,2014-09-22 16:00,,PT_Normal,,,,,8XQzuWkDsU6TEgq8IzmprQ,VHydX4u7QpWKAG+PcMC4Xw,,,N,0,0,,,2014-04-05 12:28,2014-04-05 13:21,admin,admin,
2791,142534,1749,35727,642,0,N,N,N,CP_Drtn,TT_Task,DT_FixedDUR2,TK_NotStart,BL2-ST-GF-1060,MEP Works in Slab & Beams,,192,0,40,0,320,320,40,3354.018234,0,3354.018234,,,,2014-10-16 08:00,2014-10-21 16:00,,2014-09-14 08:00,2014-09-18 16:00,2014-09-14 08:00,2014-09-18 16:00,2014-09-14 08:00,2014-09-18 16:00,2014-10-16 08:00,2014-10-21 16:00,,PT_Normal,,,,,CqrhEeX1bE+XzpIO/sA9ZQ,cb3ba65FRbGINKa4o7hRQQ,,,N,0,0,,,2014-04-05 12:28,2014-04-05 13:21,admin,admin,
2792,142535,1749,35894,642,0,N,N,N,CP_Drtn,TT_Task,DT_FixedDUR2,TK_NotStart,BL2-FN-GF-1000,Block Works,4433,520,0,168,0,2933,2933,168,39014.06625,0,39014.06625,,,,2015-03-08 08:00,2015-03-31 16:00,,2014-12-20 08:00,2015-01-14 16:00,2014-12-20 08:00,2015-01-14 16:00,2014-12-20 08:00,2015-01-14 16:00,2015-03-08 08:00,2015-03-31 16:00,,PT_Normal,,,,,OKNwiKJou02TeTKLMVbEDg,139biGAYSXigAtOK/Ofmqg,,,N,0,0,,,2014-04-05 12:28,2014-04-05 13:21,admin,admin,
2793,142536,1749,35894,642,0,N,N,N,CP_Drtn,TT_Task,DT_FixedDUR2,TK_NotStart,BL2-FN-GF-1010,Plaster,4433,480,0,152,0,4594.7,4594.7,152,54021.297589,0,54021.297589,,,,2015-04-07 08:00,2015-04-28 16:00,,2015-01-27 08:00,2015-02-17 16:00,2015-01-27 08:00,2015-02-17 16:00,2015-01-27 08:00,2015-02-17 16:00,2015-04-07 08:00,2015-04-28 16:00,,PT_Normal,,,,,UHYpkhELu0GNRWLdmCIhog,IRJtYHuqTsW2ZIxf2Y3cAA,,,N,0,0,,,2014-04-05 12:28,2014-04-05 13:21,admin,admin,
2794,142537,1749,35894,642,0,N,N,N,CP_Drtn,TT_Task,DT_FixedDUR2,TK_NotStart,BL2-FN-GF-1020,Paint 1st Coat,4433,640,0,120,0,459.4,459.4,120,8332.399305,0,8332.399305,,,,2015-05-23 08:00,2015-06-07 16:00,,2015-02-18 08:00,2015-03-07 16:00,2015-02-18 08:00,2015-03-07 16:00,2015-02-18 08:00,2015-03-07 16:00,2015-05-23 08:00,2015-06-07 16:00,,PT_Normal,,,,,g5hqpahVUEG33H2pozRDZQ,LnkTW9T9QIqO4Vnn3Qy1Aw,,,N,0,0,,,2014-04-05 12:28,2014-04-05 13:21,admin,admin,
2795,142538,1749,35894,642,0,N,N,N,CP_Drtn,TT_Task,DT_FixedDUR2,TK_NotStart,BL2-FN-GF-1030,Ceiling Paint,4433,640,0,80,0,43,43,80,269.675284,0,269.675284,,,,2015-06-03 08:00,2015-06-12 16:00,,2015-03-02 08:00,2015-03-12 16:00,2015-03-02 08:00,2015-03-12 16:00,2015-03-02 08:00,2015-03-12 16:00,2015-06-03 08:00,2015-06-12 16:00,,PT_Normal,,,,,Vjs/QfF6jE68Kz/aZ009ag,EwY5t0cmRZ60UqR2JuJFhA,,,N,0,0,,,2014-04-05 12:28,2014-04-05 13:21,admin,admin,
2796,142539,1749,35894,642,0,N,N,N,CP_Drtn,TT_Task,DT_FixedDUR2,TK_NotStart,BL2-FN-GF-1040,Waterproofing,4433,640,0,64,0,7,7,64,139.282792,0,139.282792,,,,2015-06-13 08:00,2015-06-20 16:00,,2015-03-14 08:00,2015-03-22 16:00,2015-03-14 08:00,2015-03-22 16:00,2015-03-14 08:00,2015-03-22 16:00,2015-06-13 08:00,2015-06-20 16:00,,PT_Normal,,,,,+18wW5D+bU2UvKfdsEXJMQ,l4+dvxpnSSywf+0aW4j8kA,,,N,0,0,,,2014-04-05 12:28,2014-04-05 13:21,admin,admin,
2797,142540,1749,35894,642,0,N,N,N,CP_Drtn,TT_Task,DT_FixedDUR2,TK_NotStart,BL2-FN-GF-1060,Flooring Works,4433,640,0,192,0,2093.8,2093.8,192,48819.24366,0,48819.24366,,,,2015-06-21 08:00,2015-07-14 16:00,,2015-03-23 08:00,2015-04-19 16:00,2015-03-23 08:00,2015-04-19 16:00,2015-03-23 08:00,2015-04-19 16:00,2015-06-21 08:00,2015-07-14 16:00,,PT_Normal,,,,,3bofUSsDMUKy7hZ6Z0xxYw,2/fuMqMFRhmDWesSZF5m2g,,,N,0,0,,,2014-04-05 12:28,2014-04-05 13:21,admin,admin,
2798,142541,1749,35894,642,0,N,N,N,CP_Drtn,TT_Task,DT_FixedDUR2,TK_NotStart,BL2-FN-GF-1100,Final Paint,,1072,0,80,0,0,0,80,10,0,10,,,,2016-01-25 08:00,2016-02-03 16:00,,2015-09-13 08:00,2015-09-22 16:00,2015-09-13 08:00,2015-09-22 16:00,2015-09-13 08:00,2015-09-22 16:00,2016-01-25 08:00,2016-02-03 16:00,,PT_Normal,,,,,N8mNsTmFXkqT2MuLaJncWA,mVwb/4QhSDu48Cp41uHxdQ,,,N,0,0,,,2014-04-05 12:28,2014-04-05 13:21,admin,admin,
2799,142542,1749,35894,642,0,N,N,N,CP_Drtn,TT_Task,DT_FixedDUR2,TK_NotStart,BL2-FN-GF-1050,Wall Tiling,4433,840,200,80,0,1797,1797,80,7993.321408,0,7993.321408,,,,2015-07-08 08:00,2015-07-17 16:00,,2015-03-14 08:00,2015-03-24 16:00,2015-03-14 08:00,2015-03-24 16:00,2015-03-14 08:00,2015-03-24 16:00,2015-07-08 08:00,2015-07-17 16:00,,PT_Normal,,,,,ZFSgTNn3r0ef+vsv7/vKCw,b0zGDMyFTn+O+zbJXA01qw,,,N,0,0,,,2014-04-05 12:28,2014-04-05 13:21,admin,admin,
2800,142543,1749,35894,642,0,N,N,N,CP_Drtn,TT_Task,DT_FixedDUR2,TK_NotStart,BL2-FN-GF-1070,False Ceiling,4433,640,0,120,0,5335,5335,120,44780.42198,0,44780.42198,,,,2015-07-18 08:00,2015-08-01 16:00,,2015-04-23 08:00,2015-05-10 16:00,2015-04-23 08:00,2015-05-10 16:00,2015-04-23 08:00,2015-05-10 16:00,2015-07-18 08:00,2015-08-01 16:00,,PT_Normal,,,,,4Kw3MuYd40Kjmp9nbUAVUg,V5T6LqYqRPmy4Mi598BddA,,,N,0,0,,,2014-04-05 12:28,2014-04-05 13:21,admin,admin,
2801,142544,1749,35894,642,0,N,N,N,CP_Drtn,TT_Task,DT_FixedDUR2,TK_NotStart,BL2-FN-GF-1080,Hand Rails for Stairs,4433,640,0,120,0,43,43,120,9498.792932,0,9498.792932,,,,2015-08-02 08:00,2015-08-16 16:00,,2015-05-11 08:00,2015-05-27 16:00,2015-05-11 08:00,2015-05-27 16:00,2015-05-11 08:00,2015-05-27 16:00,2015-08-02 08:00,2015-08-16 16:00,,PT_Normal,,,,,ckDavGatqU+Z8wS55BUV6Q,WQT+YkzuQj20eJ+ul39RqA,,,N,0,0,,,2014-04-05 12:28,2014-04-05 13:21,admin,admin,
2802,142545,1749,35894,642,0,N,N,N,CP_Drtn,TT_Task,DT_FixedDUR2,TK_NotStart,BL2-FN-GF-1090,Doors Installation/Alumium Doors,,640,0,120,0,0,0,120,32228.960741,0,32228.960741,,,,2015-08-17 08:00,2015-08-31 16:00,,2015-05-28 08:00,2015-06-12 16:00,2015-05-28 08:00,2015-06-12 16:00,2015-05-28 08:00,2015-06-12 16:00,2015-08-17 08:00,2015-08-31 16:00,,PT_Normal,,,,,UnBsd91LSUmyK3eJ64s6dQ,Vq+FsrYGSuaFywO3V4Qixg,,,N,0,0,,,2014-04-05 12:28,2014-04-05 13:21,admin,admin,
2803,142546,1749,35898,642,0,N,N,N,CP_Drtn,TT_Task,DT_FixedDUR2,TK_NotStart,BL2-ST-1F-1000,Reinforcement for Verticals,4433,192,0,80,0,716.07571,716.07571,80,47885.66,0,47885.66,,,,2014-10-23 08:00,2014-11-06 16:00,,2014-09-21 08:00,2014-10-01 16:00,2014-09-21 08:00,2014-10-01 16:00,2014-09-21 08:00,2014-10-01 16:00,2014-10-23 08:00,2014-11-06 16:00,,PT_Normal,,,,,fwWnkyv4o0yyAY6L0HmV4w,OB4VlYUmQCulua3y01X3qw,,,N,0,0,,,2014-04-05 12:28,2014-04-05 13:21,admin,admin,
2804,142547,1749,35898,642,0,N,N,N,CP_Drtn,TT_Task,DT_FixedDUR2,TK_NotStart,BL2-ST-1F-1020,FW for Verticals,4433,192,0,64,0,9331.862612,9331.862612,64,41034.95,0,41034.95,,,,2014-11-08 08:00,2014-11-16 16:00,,2014-10-02 08:00,2014-10-15 16:00,2014-10-02 08:00,2014-10-15 16:00,2014-10-02 08:00,2014-10-15 16:00,2014-11-08 08:00,2014-11-16 16:00,,PT_Normal,,,,,18pP1qd5R0yt4udRKSL+4Q,kQUXglkkSR2fihD0CSRtfw,,,N,0,0,,,2014-04-05 12:28,2014-04-05 13:21,admin,admin,
2805,142548,1749,35898,642,0,N,N,N,CP_Drtn,TT_Task,DT_FixedDUR2,TK_NotStart,BL2-ST-1F-1030,Concrete Verticals,4433,192,0,8,0,2046.921373,2046.921373,8,34135.819,0,34135.819,,,,2014-11-17 08:00,2014-11-17 16:00,,2014-10-16 08:00,2014-10-16 16:00,2014-10-16 08:00,2014-10-16 16:00,2014-10-16 08:00,2014-10-16 16:00,2014-11-17 08:00,2014-11-17 16:00,,PT_Normal,,,,,tRjgDKVATU2TrQAx4VlsSg,Bl1E1b3HTa2CL7c75rKwvQ,,,N,0,0,,,2014-04-05 12:28,2014-04-05 13:21,admin,admin,
2806,142549,1749,35898,642,0,N,N,N,CP_Drtn,TT_Task,DT_FixedDUR2,TK_NotStart,BL2-ST-1F-1040,FW for Slab,4433,192,0,64,0,1081.291951,1081.291951,64,4761.8324,0,4761.8324,,,,2014-11-18 08:00,2014-11-26 16:00,,2014-10-18 08:00,2014-10-27 16:00,2014-10-18 08:00,2014-10-27 16:00,2014-10-18 08:00,2014-10-27 16:00,2014-11-18 08:00,2014-11-26 16:00,,PT_Normal,,,,,/mc1M2EBgUuifHAj5ulACQ,1XQPsNRMQmKh5g/PjgMjBg,,,N,0,0,,,2014-04-05 12:28,2014-04-05 13:21,admin,admin,
2807,142550,1749,35898,642,0,N,N,N,CP_Drtn,TT_Task,DT_FixedDUR2,TK_NotStart,BL2-ST-1F-1050,Reinforcement for Slab,4433,192,0,64,0,1542.303395,1542.303395,64,103123.9024,0,103123.9024,,,,2014-11-27 08:00,2014-12-06 16:00,,2014-10-28 08:00,2014-11-08 16:00,2014-10-28 08:00,2014-11-08 16:00,2014-10-28 08:00,2014-11-08 16:00,2014-11-27 08:00,2014-12-06 16:00,,PT_Normal,,,,,cl40iaxuLUGvU4SnOa7Ing,AyuAl62mTFmcjffqkqEitg,,,N,0,0,,,2014-04-05 12:28,2014-04-05 13:21,admin,admin,
2808,142551,1749,35898,642,0,N,N,N,CP_Drtn,TT_Task,DT_FixedDUR2,TK_NotStart,BL2-ST-1F-1070,Concrete for Slab,4433,192,0,8,0,3569.076005,3569.076005,8,59519.536,0,59519.536,,,,2014-12-07 08:00,2014-12-07 16:00,,2014-11-09 08:00,2014-11-09 16:00,2014-11-09 08:00,2014-11-09 16:00,2014-11-09 08:00,2014-11-09 16:00,2014-12-07 08:00,2014-12-07 16:00,,PT_Normal,,,,,tYdGWDPL5UCO5OFecw4Vqg,pa6r+LebSei7DVDymKaNqg,,,N,0,0,,,2014-04-05 12:28,2014-04-05 13:21,admin,admin,
2809,142552,1749,35898,642,0,N,N,N,CP_Drtn,TT_Task,DT_FixedDUR2,TK_NotStart,BL2-ST-1F-1010,MEP Works in Vertical Element,,256,64,40,0,160,160,40,1803.546829,0,1803.546829,,,,2014-11-11 08:00,2014-11-16 16:00,,2014-09-27 08:00,2014-10-01 16:00,2014-09-27 08:00,2014-10-01 16:00,2014-09-27 08:00,2014-10-01 16:00,2014-11-11 08:00,2014-11-16 16:00,,PT_Normal,,,,,jXYLDXRHLUuNpaE7eE2yRw,z2zXTU2YSAyk+tLPR90XPQ,,,N,0,0,,,2014-04-05 12:28,2014-04-05 13:21,admin,admin,
2810,142553,1749,35898,642,0,N,N,N,CP_Drtn,TT_Task,DT_FixedDUR2,TK_NotStart,BL2-ST-1F-1060,MEP Works in Slab & Beams,,192,0,40,0,320,320,40,3354.018234,0,3354.018234,,,,2014-12-01 08:00,2014-12-06 16:00,,2014-11-02 08:00,2014-11-08 16:00,2014-11-02 08:00,2014-11-08 16:00,2014-11-02 08:00,2014-11-08 16:00,2014-12-01 08:00,2014-12-06 16:00,,PT_Normal,,,,,+SNDBsoPMECJnSL1xpOWnQ,eJlq4H2PT3+MIBD3BXHulw,,,N,0,0,,,2014-04-05 12:28,2014-04-05 13:21,admin,admin,
2811,142554,1749,35748,642,0,N,N,N,CP_Drtn,TT_Task,DT_FixedDUR2,TK_NotStart,BL2-FN-1F-1000,Block Works,4433,352,0,168,0,1993,1993,168,26519.959378,0,26519.959378,,,,2015-03-12 08:00,2015-04-05 16:00,,2015-01-20 08:00,2015-02-12 16:00,2015-01-20 08:00,2015-02-12 16:00,2015-01-20 08:00,2015-02-12 16:00,2015-03-12 08:00,2015-04-05 16:00,,PT_Normal,,,,,Rn/9b0iElk6a4mpGYyMT2g,ZKNX7oW1TIC3gsEPQjiFcQ,,,N,0,0,,,2014-04-05 12:28,2014-04-05 13:21,admin,admin,
2812,142555,1749,35748,642,0,N,N,N,CP_Drtn,TT_Task,DT_FixedDUR2,TK_NotStart,BL2-FN-1F-1010,Plaster,4433,352,0,152,0,3122,3122,152,36717.891578,0,36717.891578,,,,2015-05-02 08:00,2015-05-23 16:00,,2015-03-11 08:00,2015-04-01 16:00,2015-03-11 08:00,2015-04-01 16:00,2015-03-11 08:00,2015-04-01 16:00,2015-05-02 08:00,2015-05-23 16:00,,PT_Normal,,,,,VD3cBrRKy0+Hx9kFotdTGg,YINYE5e9SyOaqyyk2flB5Q,,,N,0,0,,,2014-04-05 12:28,2014-04-05 13:21,admin,admin,
2813,142556,1749,35748,642,0,N,N,N,CP_Drtn,TT_Task,DT_FixedDUR2,TK_NotStart,BL2-FN-1F-1020,Paint 1st Coat,4433,520,0,120,0,312.2,312.2,120,5666.888979,0,5666.888979,,,,2015-06-15 08:00,2015-06-29 16:00,,2015-04-02 08:00,2015-04-19 16:00,2015-04-02 08:00,2015-04-19 16:00,2015-04-02 08:00,2015-04-19 16:00,2015-06-15 08:00,2015-06-29 16:00,,PT_Normal,,,,,sejqbEq+SUO2TWNUE8NJgA,76iYO854SZuAgmcbzdE8KA,,,N,0,0,,,2014-04-05 12:28,2014-04-05 13:21,admin,admin,
2814,142557,1749,35748,642,0,N,N,N,CP_Drtn,TT_Task,DT_FixedDUR2,TK_NotStart,BL2-FN-1F-1030,Ceiling Paint,4433,520,0,80,0,29.34,29.34,80,187.030801,0,187.030801,,,,2015-06-25 08:00,2015-07-04 16:00,,2015-04-14 08:00,2015-04-25 16:00,2015-04-14 08:00,2015-04-25 16:00,2015-04-14 08:00,2015-04-25 16:00,2015-06-25 08:00,2015-07-04 16:00,,PT_Normal,,,,,zpMLP75C3EGFuPsVSeKQHw,OCWPEEVkQcKvGC9AzFnIWw,,,N,0,0,,,2014-04-05 12:28,2014-04-05 13:21,admin,admin,
2815,142558,1749,35748,642,0,N,N,N,CP_Drtn,TT_Task,DT_FixedDUR2,TK_NotStart,BL2-FN-1F-1040,Waterproofing,4433,520,0,40,0,7,7,40,136.282792,0,136.282792,,,,2015-07-05 08:00,2015-07-09 16:00,,2015-04-26 08:00,2015-04-30 16:00,2015-04-26 08:00,2015-04-30 16:00,2015-04-26 08:00,2015-04-30 16:00,2015-07-05 08:00,2015-07-09 16:00,,PT_Normal,,,,,fU20wypL60qR1Sk1vxfqlg,N6r316cmQ4abtQwJ97l8Ew,,,N,0,0,,,2014-04-05 12:28,2014-04-05 13:21,admin,admin,
2816,142559,1749,35748,642,0,N,N,N,CP_Drtn,TT_Task,DT_FixedDUR2,TK_NotStart,BL2-FN-1F-1060,Flooring Works,4433,520,0,160,0,1318,1318,160,30748.505221,0,30748.505221,,,,2015-07-10 08:00,2015-07-29 16:00,,2015-05-02 08:00,2015-05-24 16:00,2015-05-02 08:00,2015-05-24 16:00,2015-05-02 08:00,2015-05-24 16:00,2015-07-10 08:00,2015-07-29 16:00,,PT_Normal,,,,,UsUSyey4tkepC2WZMwocew,UQ+UDcgARDaa9a6rbilvxQ,,,N,0,0,,,2014-04-05 12:28,2014-04-05 13:21,admin,admin,
2817,142560,1749,35748,642,0,N,N,N,CP_Drtn,TT_Task,DT_FixedDUR2,TK_NotStart,BL2-FN-1F-1100,Final Paint,,1040,0,80,0,0,0,80,10,0,10,,,,2016-01-27 08:00,2016-02-05 16:00,,2015-09-19 08:00,2015-09-28 16:00,2015-09-19 08:00,2015-09-28 16:00,2015-09-19 08:00,2015-09-28 16:00,2016-01-27 08:00,2016-02-05 16:00,,PT_Normal,,,,,CLqk7l+jrE+Q/G4x/gogSQ,tgYGF3uNSg67H12GTjgKqQ,,,N,0,0,,,2014-04-05 12:28,2014-04-05 13:21,admin,admin,
2818,142561,1749,35748,642,0,N,N,N,CP_Drtn,TT_Task,DT_FixedDUR2,TK_NotStart,BL2-FN-1F-1050,Wall Tiling,4433,664,144,80,0,1663.8,1663.8,80,7392.455384,0,7392.455384,,,,2015-07-23 08:00,2015-08-01 16:00,,2015-04-26 08:00,2015-05-06 16:00,2015-04-26 08:00,2015-05-06 16:00,2015-04-26 08:00,2015-05-06 16:00,2015-07-23 08:00,2015-08-01 16:00,,PT_Normal,,,,,YgrlB8GSwkuRK+3adHFp5Q,rT40Y/zISeq45ZRwZpcOFg,,,N,0,0,,,2014-04-05 12:28,2014-04-05 13:21,admin,admin,
2819,142562,1749,35748,642,0,N,N,N,CP_Drtn,TT_Task,DT_FixedDUR2,TK_NotStart,BL2-FN-1F-1070,False Ceiling,4433,520,0,120,0,5335,5335,120,44780.42198,0,44780.42198,,,,2015-08-02 08:00,2015-08-16 16:00,,2015-05-28 08:00,2015-06-12 16:00,2015-05-28 08:00,2015-06-12 16:00,2015-05-28 08:00,2015-06-12 16:00,2015-08-02 08:00,2015-08-16 16:00,,PT_Normal,,,,,SAQIIZugbUSXG39g1XoM/w,G1uD+V8GSq2fRdyLKjIjIw,,,N,0,0,,,2014-04-05 12:28,2014-04-05 13:21,admin,admin,
2820,142563,1749,35748,642,0,N,N,N,CP_Drtn,TT_Task,DT_FixedDUR2,TK_NotStart,BL2-FN-1F-1080,Hand Rails for Stairs,4433,520,0,120,0,43,43,120,9498.792932,0,9498.792932,,,,2015-08-17 08:00,2015-08-31 16:00,,2015-06-13 08:00,2015-06-27 16:00,2015-06-13 08:00,2015-06-27 16:00,2015-06-13 08:00,2015-06-27 16:00,2015-08-17 08:00,2015-08-31 16:00,,PT_Normal,,,,,kYGH5PvTgEK1d+CtCmQGWw,aOgzUuh3TRqeIOYSYA2T+g,,,N,0,0,,,2014-04-05 12:28,2014-04-05 13:21,admin,admin,
2821,142564,1749,35748,642,0,N,N,N,CP_Drtn,TT_Task,DT_FixedDUR2,TK_NotStart,BL2-FN-1F-1090,Doors Installation,,520,0,120,0,0,0,120,26005.108727,0,26005.108727,,,,2015-09-01 08:00,2015-09-15 16:00,,2015-06-28 08:00,2015-07-12 16:00,2015-06-28 08:00,2015-07-12 16:00,2015-06-28 08:00,2015-07-12 16:00,2015-09-01 08:00,2015-09-15 16:00,,PT_Normal,,,,,Dk+/Eadde0eupV04Uy8tTQ,MkXccMyxQYS0PgolGuJwIQ,,,N,0,0,,,2014-04-05 12:28,2014-04-05 13:21,admin,admin,
2822,142565,1749,35901,642,0,N,N,N,CP_Drtn,TT_Task,DT_FixedDUR2,TK_NotStart,BL2-ST-2F-1000,Reinforcement for Verticals,4433,192,0,64,0,716.07571,716.07571,64,47883.66,0,47883.66,,,,2014-12-08 08:00,2014-12-16 16:00,,2014-11-10 08:00,2014-11-18 16:00,2014-11-10 08:00,2014-11-18 16:00,2014-11-10 08:00,2014-11-18 16:00,2014-12-08 08:00,2014-12-16 16:00,,PT_Normal,,,,,MN/9xbdFO0Oorn+8eHV4Lg,KsCLND9ZQYaxd7sYyKi/Vg,,,N,0,0,,,2014-04-05 12:28,2014-04-05 13:21,admin,admin,
2823,142566,1749,35901,642,0,N,N,N,CP_Drtn,TT_Task,DT_FixedDUR2,TK_NotStart,BL2-ST-2F-1020,FW for Verticals,4433,192,0,64,0,8705.016432,8705.016432,64,38279.06,0,38279.06,,,,2014-12-17 08:00,2014-12-25 16:00,,2014-11-19 08:00,2014-11-27 16:00,2014-11-19 08:00,2014-11-27 16:00,2014-11-19 08:00,2014-11-27 16:00,2014-12-17 08:00,2014-12-25 16:00,,PT_Normal,,,,,OHkZM+BsWUWWGg0dAtOy9A,ioDvRs4SRl+bGNY643awng,,,N,0,0,,,2014-04-05 12:28,2014-04-05 13:21,admin,admin,
2824,142567,1749,35901,642,0,N,N,N,CP_Drtn,TT_Task,DT_FixedDUR2,TK_NotStart,BL2-ST-2F-1030,Concrete Verticals,4433,192,0,8,0,1902.900217,1902.900217,8,31734.097,0,31734.097,,,,2014-12-27 08:00,2014-12-27 16:00,,2014-11-29 08:00,2014-11-29 16:00,2014-11-29 08:00,2014-11-29 16:00,2014-11-29 08:00,2014-11-29 16:00,2014-12-27 08:00,2014-12-27 16:00,,PT_Normal,,,,,VCuXUNhULEqYeknMMIl+Uw,T+c66LS5SZm1HSOMxpl9gg,,,N,0,0,,,2014-04-05 12:28,2014-04-05 13:21,admin,admin,
2825,142568,1749,35901,642,0,N,N,N,CP_Drtn,TT_Task,DT_FixedDUR2,TK_NotStart,BL2-ST-2F-1040,FW for Slab,4433,192,0,64,0,11750.709733,11750.709733,64,51669.26,0,51669.26,,,,2014-12-28 08:00,2015-01-07 16:00,,2014-11-30 08:00,2014-12-08 16:00,2014-11-30 08:00,2014-12-08 16:00,2014-11-30 08:00,2014-12-08 16:00,2014-12-28 08:00,2015-01-07 16:00,,PT_Normal,,,,,eOWFtvNUjke+CcZ3iFjKBQ,gevSG1pZSw6imRMqF0XcJg,,,N,0,0,,,2014-04-05 12:28,2014-04-05 13:21,admin,admin,
2826,142569,1749,35901,642,0,N,N,N,CP_Drtn,TT_Task,DT_FixedDUR2,TK_NotStart,BL2-ST-2F-1050,Reinforcement for Slab,4433,192,0,64,0,1542.303395,1542.303395,64,103123.9024,0,103123.9024,,,,2015-01-08 08:00,2015-01-17 16:00,,2014-12-09 08:00,2014-12-17 16:00,2014-12-09 08:00,2014-12-17 16:00,2014-12-09 08:00,2014-12-17 16:00,2015-01-08 08:00,2015-01-17 16:00,,PT_Normal,,,,,mXHAKCzuCUu3e54jXzuurw,RYpDUneoReWHIz+gJ2lmHQ,,,N,0,0,,,2014-04-05 12:28,2014-04-05 13:21,admin,admin,
2827,142570,1749,35901,642,0,N,N,N,CP_Drtn,TT_Task,DT_FixedDUR2,TK_NotStart,BL2-ST-2F-1070,Concrete for Slab,4433,192,0,8,0,3434.987343,3434.987343,8,57283.45,0,57283.45,,,,2015-01-18 08:00,2015-01-18 16:00,,2014-12-18 08:00,2014-12-18 16:00,2014-12-18 08:00,2014-12-18 16:00,2014-12-18 08:00,2014-12-18 16:00,2015-01-18 08:00,2015-01-18 16:00,,PT_Normal,,,,,jvZHelMzVU26qux4rTPQJQ,BnOZuAR9RKeFpiYOLZT6FA,,,N,0,0,,,2014-04-05 12:28,2014-04-05 13:21,admin,admin,
2828,142571,1749,35901,642,0,N,N,N,CP_Drtn,TT_Task,DT_FixedDUR2,TK_NotStart,BL2-ST-2F-1010,MEP Works in Vertical Element,,256,64,40,0,160,160,40,1803.546829,0,1803.546829,,,,2014-12-21 08:00,2014-12-25 16:00,,2014-11-13 08:00,2014-11-18 16:00,2014-11-13 08:00,2014-11-18 16:00,2014-11-13 08:00,2014-11-18 16:00,2014-12-21 08:00,2014-12-25 16:00,,PT_Normal,,,,,Aht+B9X25EybZMTb3tiH+Q,0VZorNZ9SiCl4FILO3M4vQ,,,N,0,0,,,2014-04-05 12:28,2014-04-05 13:21,admin,admin,
2829,142572,1749,35901,642,0,N,N,N,CP_Drtn,TT_Task,DT_FixedDUR2,TK_NotStart,BL2-ST-2F-1060,MEP Works in Slab & Beams,,192,0,40,0,320,320,40,3354.018234,0,3354.018234,,,,2015-01-12 08:00,2015-01-17 16:00,,2014-12-13 08:00,2014-12-17 16:00,2014-12-13 08:00,2014-12-17 16:00,2014-12-13 08:00,2014-12-17 16:00,2015-01-12 08:00,2015-01-17 16:00,,PT_Normal,,,,,ruy1Hb4QMUePLVWf6+jwew,4IBmnaHuTq2d/IN7t1VR+w,,,N,0,0,,,2014-04-05 12:28,2014-04-05 13:21,admin,admin,
2830,142573,1749,35767,642,0,N,N,N,CP_Drtn,TT_Task,DT_FixedDUR2,TK_NotStart,BL2-FN-2F-1000,Block Works,4433,424,0,168,0,1993,1993,168,26519.959378,0,26519.959378,,,,2015-04-18 08:00,2015-05-11 16:00,,2015-02-15 08:00,2015-03-10 16:00,2015-02-15 08:00,2015-03-10 16:00,2015-02-15 08:00,2015-03-10 16:00,2015-04-18 08:00,2015-05-11 16:00,,PT_Normal,,,,,ZNjvpf/xaEeVAX8cR+6COQ,4fhmwo8UTMalrSl/PUXr1Q,,,N,0,0,,,2014-04-05 12:28,2014-04-05 13:21,admin,admin,
2831,142574,1749,35767,642,0,N,N,N,CP_Drtn,TT_Task,DT_FixedDUR2,TK_NotStart,BL2-FN-2F-1010,Plaster,4433,424,0,152,0,3122,3122,152,36717.891578,0,36717.891578,,,,2015-05-26 08:00,2015-06-14 16:00,,2015-03-25 08:00,2015-04-15 16:00,2015-03-25 08:00,2015-04-15 16:00,2015-03-25 08:00,2015-04-15 16:00,2015-05-26 08:00,2015-06-14 16:00,,PT_Normal,,,,,N567vkZj/k+ImtGuL0i8qw,/HxioEkiSyObNRyy30B/4g,,,N,0,0,,,2014-04-05 12:28,2014-04-05 13:21,admin,admin,
2832,142575,1749,35767,642,0,N,N,N,CP_Drtn,TT_Task,DT_FixedDUR2,TK_NotStart,BL2-FN-2F-1020,Paint 1st Coat,4433,544,0,120,0,312.2,312.2,120,5666.888979,0,5666.888979,,,,2015-06-30 08:00,2015-07-14 16:00,,2015-04-16 08:00,2015-05-03 16:00,2015-04-16 08:00,2015-05-03 16:00,2015-04-16 08:00,2015-05-03 16:00,2015-06-30 08:00,2015-07-14 16:00,,PT_Normal,,,,,dGBlD6cZU06P/HJ9lbfyuA,BM0pAoAoQR2uRYTsRS23YQ,,,N,0,0,,,2014-04-05 12:28,2014-04-05 13:21,admin,admin,
2833,142576,1749,35767,642,0,N,N,N,CP_Drtn,TT_Task,DT_FixedDUR2,TK_NotStart,BL2-FN-2F-1030,Ceiling Paint,4433,544,0,80,0,29.34,29.34,80,187.030801,0,187.030801,,,,2015-07-10 08:00,2015-07-19 16:00,,2015-04-28 08:00,2015-05-09 16:00,2015-04-28 08:00,2015-05-09 16:00,2015-04-28 08:00,2015-05-09 16:00,2015-07-10 08:00,2015-07-19 16:00,,PT_Normal,,,,,VuTkYhRJXUG4kp0gDiWN9g,T/LAfFZvR3ez2q6bSsIyzA,,,N,0,0,,,2014-04-05 12:28,2014-04-05 13:21,admin,admin,
2834,142577,1749,35767,642,0,N,N,N,CP_Drtn,TT_Task,DT_FixedDUR2,TK_NotStart,BL2-FN-2F-1040,Waterproofing,4433,544,0,40,0,7,7,40,136.282792,0,136.282792,,,,2015-07-20 08:00,2015-07-24 16:00,,2015-05-10 08:00,2015-05-14 16:00,2015-05-10 08:00,2015-05-14 16:00,2015-05-10 08:00,2015-05-14 16:00,2015-07-20 08:00,2015-07-24 16:00,,PT_Normal,,,,,vBcGxn8tp02ZAlM7R/RWOQ,RTB3s99cRfWtwVV+rbuxgg,,,N,0,0,,,2014-04-05 12:28,2014-04-05 13:21,admin,admin,
2835,142578,1749,35767,642,0,N,N,N,CP_Drtn,TT_Task,DT_FixedDUR2,TK_NotStart,BL2-FN-2F-1060,Flooring Works,4433,544,0,160,0,1318,1318,160,30748.505221,0,30748.505221,,,,2015-07-25 08:00,2015-08-13 16:00,,2015-05-16 08:00,2015-06-06 16:00,2015-05-16 08:00,2015-06-06 16:00,2015-05-16 08:00,2015-06-06 16:00,2015-07-25 08:00,2015-08-13 16:00,,PT_Normal,,,,,ZseldNL0J0yX0egTNpM60A,T3br4sLKQ3WwYxRrThSceA,,,N,0,0,,,2014-04-05 12:28,2014-04-05 13:21,admin,admin,
2836,142579,1749,35767,642,0,N,N,N,CP_Drtn,TT_Task,DT_FixedDUR2,TK_NotStart,BL2-FN-2F-1100,Final Paint,,1008,0,80,0,0,0,80,10,0,10,,,,2016-01-29 08:00,2016-02-07 16:00,,2015-09-25 08:00,2015-10-04 16:00,2015-09-25 08:00,2015-10-04 16:00,2015-09-25 08:00,2015-10-04 16:00,2016-01-29 08:00,2016-02-07 16:00,,PT_Normal,,,,,2eM30sHoHEGvs0UVgwosbA,XLgvcqp9SeunkyzktwnQ7w,,,N,0,0,,,2014-04-05 12:28,2014-04-05 13:21,admin,admin,
2837,142580,1749,35767,642,0,N,N,N,CP_Drtn,TT_Task,DT_FixedDUR2,TK_NotStart,BL2-FN-2F-1050,Wall Tiling,4433,688,144,80,0,3328,3328,80,14775,0,14775,,,,2015-08-07 08:00,2015-08-16 16:00,,2015-05-10 08:00,2015-05-20 16:00,2015-05-10 08:00,2015-05-20 16:00,2015-05-10 08:00,2015-05-20 16:00,2015-08-07 08:00,2015-08-16 16:00,,PT_Normal,,,,,DJcbPwMwtECdvrnxjWN7CQ,Ck22LL4tTzuMd2mlwhkmKA,,,N,0,0,,,2014-04-05 12:28,2014-04-05 13:21,admin,admin,
2838,142581,1749,35767,642,0,N,N,N,CP_Drtn,TT_Task,DT_FixedDUR2,TK_NotStart,BL2-FN-2F-1070,False Ceiling,4433,544,0,120,0,5335,5335,120,44780.42198,0,44780.42198,,,,2015-08-17 08:00,2015-08-31 16:00,,2015-06-10 08:00,2015-06-24 16:00,2015-06-10 08:00,2015-06-24 16:00,2015-06-10 08:00,2015-06-24 16:00,2015-08-17 08:00,2015-08-31 16:00,,PT_Normal,,,,,PudbyYxQu0eUYU7yvdzEQQ,jabk4CFzQGe6Z6L0rqMRVw,,,N,0,0,,,2014-04-05 12:28,2014-04-05 13:21,admin,admin,
2839,142582,1749,35767,642,0,N,N,N,CP_Drtn,TT_Task,DT_FixedDUR2,TK_NotStart,BL2-FN-2F-1080,Hand Rails for Stairs,4433,544,24,120,0,43,43,120,9498.792932,0,9498.792932,,,,2015-09-01 08:00,2015-09-15 16:00,,2015-06-25 08:00,2015-07-09 16:00,2015-06-25 08:00,2015-07-09 16:00,2015-06-25 08:00,2015-07-09 16:00,2015-09-01 08:00,2015-09-15 16:00,,PT_Normal,,,,,vWDOSAItqU+U6nUcKEiz/g,luEbTmTNRcaecG6kYA375g,,,N,0,0,,,2014-04-05 12:28,2014-04-05 13:21,admin,admin,
2840,142583,1749,35767,642,0,N,N,N,CP_Drtn,TT_Task,DT_FixedDUR2,TK_NotStart,BL2-FN-2F-1090,Doors Installation,,520,0,120,0,0,0,120,26005.108727,0,26005.108727,,,,2015-09-16 08:00,2015-09-30 16:00,,2015-07-13 08:00,2015-07-27 16:00,2015-07-13 08:00,2015-07-27 16:00,2015-07-13 08:00,2015-07-27 16:00,2015-09-16 08:00,2015-09-30 16:00,,PT_Normal,,,,,7JZ4ruOoOUKSrq/XTuIOpA,FGu3LuJISgii93Z6hqcoww,,,N,0,0,,,2014-04-05 12:28,2014-04-05 13:21,admin,admin,
2841,142584,1749,35690,642,0,N,N,N,CP_Drtn,TT_Task,DT_FixedDUR2,TK_NotStart,BL2-ST-3F-1000,Reinforcement for Verticals,4433,192,0,64,0,842.201246,842.201246,64,56316.208727,0,56316.208727,,,,2015-01-19 08:00,2015-01-27 16:00,,2014-12-20 08:00,2014-12-28 16:00,2014-12-20 08:00,2014-12-28 16:00,2014-12-20 08:00,2014-12-28 16:00,2015-01-19 08:00,2015-01-27 16:00,,PT_Normal,,,,,sY5KkJkElk6UBotD+TBVjA,TmNKip0vQsyYM1gQJzjSLQ,,,N,0,0,,,2014-04-05 12:28,2014-04-05 13:21,admin,admin,
2842,142585,1749,35690,642,0,N,N,N,CP_Drtn,TT_Task,DT_FixedDUR2,TK_NotStart,BL2-ST-3F-1020,FW for Verticals,4433,192,0,40,0,9250.408023,9250.408023,40,40673.84,0,40673.84,,,,2015-01-28 08:00,2015-02-02 16:00,,2014-12-29 08:00,2015-01-05 16:00,2014-12-29 08:00,2015-01-05 16:00,2014-12-29 08:00,2015-01-05 16:00,2015-01-28 08:00,2015-02-02 16:00,,PT_Normal,,,,,rb/MaZw8qkOOijWU4DIgLA,KesA1zfLSniU1zZ7Qioibg,,,N,0,0,,,2014-04-05 12:28,2014-04-05 13:21,admin,admin,
2843,142586,1749,35690,642,0,N,N,N,CP_Drtn,TT_Task,DT_FixedDUR2,TK_NotStart,BL2-ST-3F-1030,Concrete Verticals,4433,192,0,8,0,2003.265215,2003.265215,8,33908.0695,0,33908.0695,,,,2015-02-03 08:00,2015-02-03 16:00,,2015-01-06 08:00,2015-01-06 16:00,2015-01-06 08:00,2015-01-06 16:00,2015-01-06 08:00,2015-01-06 16:00,2015-02-03 08:00,2015-02-03 16:00,,PT_Normal,,,,,6wKE3sa6W0+1ChG2XYnowg,U9/RbWoqT6af+qHzXaKbGw,,,N,0,0,,,2014-04-05 12:28,2014-04-05 13:21,admin,admin,
2844,142587,1749,35690,642,0,N,N,N,CP_Drtn,TT_Task,DT_FixedDUR2,TK_NotStart,BL2-ST-3F-1040,FW for Slab,4433,192,0,40,0,16202.380057,16202.380057,40,71237.75,0,71237.75,,,,2015-02-04 08:00,2015-02-09 16:00,,2015-01-07 08:00,2015-01-12 16:00,2015-01-07 08:00,2015-01-12 16:00,2015-01-07 08:00,2015-01-12 16:00,2015-02-04 08:00,2015-02-09 16:00,,PT_Normal,,,,,SWk/SE2nYkaR7Sdu7j1lDQ,SUVeTHFySAGYmwm5dZ7/KQ,,,N,0,0,,,2014-04-05 12:28,2014-04-05 13:21,admin,admin,
2845,142588,1749,35690,642,0,N,N,N,CP_Drtn,TT_Task,DT_FixedDUR2,TK_NotStart,BL2-ST-3F-1050,Reinforcement for Slab,4433,192,0,40,0,1629.170164,1629.170164,40,108928.6736,0,108928.6736,,,,2015-02-10 08:00,2015-02-15 16:00,,2015-01-13 08:00,2015-01-18 16:00,2015-01-13 08:00,2015-01-18 16:00,2015-01-13 08:00,2015-01-18 16:00,2015-02-10 08:00,2015-02-15 16:00,,PT_Normal,,,,,x45hPbLHIkSIz4zgOY9yxA,of+Cotp9RZevnnUCb0UKvw,,,N,0,0,,,2014-04-05 12:28,2014-04-05 13:21,admin,admin,
2846,142589,1749,35690,642,0,N,N,N,CP_Drtn,TT_Task,DT_FixedDUR2,TK_NotStart,BL2-ST-3F-1070,Concrete for Slab,4433,192,0,8,0,4319.680781,4319.680781,8,73115.491,0,73115.491,,,,2015-02-16 08:00,2015-02-16 16:00,,2015-01-19 08:00,2015-01-19 16:00,2015-01-19 08:00,2015-01-19 16:00,2015-01-19 08:00,2015-01-19 16:00,2015-02-16 08:00,2015-02-16 16:00,,PT_Normal,,,,,vyC2NNisiESrNNOJ4gCNYg,G2fmtMspQHmXj75B/e2qHQ,,,N,0,0,,,2014-04-05 12:28,2014-04-05 13:21,admin,admin,
2847,142590,1749,35690,642,0,N,N,N,CP_Drtn,TT_Task,DT_FixedDUR2,TK_NotStart,BL2-ST-3F-1010,MEP Works in Vertical Element,,232,40,40,0,160,160,40,1803.546829,0,1803.546829,,,,2015-01-28 08:00,2015-02-02 16:00,,2014-12-23 08:00,2014-12-28 16:00,2014-12-23 08:00,2014-12-28 16:00,2014-12-23 08:00,2014-12-28 16:00,2015-01-28 08:00,2015-02-02 16:00,,PT_Normal,,,,,mfdE8frYW0utQK+hgtKO7g,qBQzeE9yRNCL0P93QLVUqQ,,,N,0,0,,,2014-04-05 12:28,2014-04-05 13:21,admin,admin,
2848,142591,1749,35690,642,0,N,N,N,CP_Drtn,TT_Task,DT_FixedDUR2,TK_NotStart,BL2-ST-3F-1060,MEP Works in Slab & Beams,,192,0,40,0,320,320,40,3354.018234,0,3354.018234,,,,2015-02-10 08:00,2015-02-15 16:00,,2015-01-13 08:00,2015-01-18 16:00,2015-01-13 08:00,2015-01-18 16:00,2015-01-13 08:00,2015-01-18 16:00,2015-02-10 08:00,2015-02-15 16:00,,PT_Normal,,,,,AZfPRjMTqkW7DIYstQGeKA,tP1DGOjjRvSVusbWFTOAOA,,,N,0,0,,,2014-04-05 12:28,2014-04-05 13:21,admin,admin,
2849,142592,1749,35678,642,0,N,N,N,CP_Drtn,TT_Task,DT_FixedDUR2,TK_NotStart,BL2-FN-3F-1000,Block Works,4433,416,0,168,0,1993,1993,168,26519.959378,0,26519.959378,,,,2015-05-12 08:00,2015-06-04 16:00,,2015-03-12 08:00,2015-04-05 16:00,2015-03-12 08:00,2015-04-05 16:00,2015-03-12 08:00,2015-04-05 16:00,2015-05-12 08:00,2015-06-04 16:00,,PT_Normal,,,,,UsQHf0NewkGK1apcdKYK7w,Ib7C1g/kQY2R2PA/17B89g,,,N,0,0,,,2014-04-05 12:28,2014-04-05 13:21,admin,admin,
2850,142593,1749,35678,642,0,N,N,N,CP_Drtn,TT_Task,DT_FixedDUR2,TK_NotStart,BL2-FN-3F-1010,Plaster,4433,416,0,152,0,3122,3122,152,36717.891578,0,36717.891578,,,,2015-06-17 08:00,2015-07-05 16:00,,2015-04-20 08:00,2015-05-11 16:00,2015-04-20 08:00,2015-05-11 16:00,2015-04-20 08:00,2015-05-11 16:00,2015-06-17 08:00,2015-07-05 16:00,,PT_Normal,,,,,UxdbaSB9g0u5LI8gE6bVfA,1LxpEEqYQt++1wbuGMzblQ,,,N,0,0,,,2014-04-05 12:28,2014-04-05 13:21,admin,admin,
2851,142594,1749,35678,642,0,N,N,N,CP_Drtn,TT_Task,DT_FixedDUR2,TK_NotStart,BL2-FN-3F-1020,Paint 1st Coat,4433,488,0,120,0,312.2,312.2,120,5666.888979,0,5666.888979,,,,2015-07-15 08:00,2015-07-29 16:00,,2015-05-12 08:00,2015-05-28 16:00,2015-05-12 08:00,2015-05-28 16:00,2015-05-12 08:00,2015-05-28 16:00,2015-07-15 08:00,2015-07-29 16:00,,PT_Normal,,,,,T3MFZ54okUOBLanu5u4suA,kNv9HNkPTxOjk8Yt86u6lg,,,N,0,0,,,2014-04-05 12:28,2014-04-05 13:21,admin,admin,
2852,142595,1749,35678,642,0,N,N,N,CP_Drtn,TT_Task,DT_FixedDUR2,TK_NotStart,BL2-FN-3F-1030,Ceiling Paint,4433,488,0,80,0,29.34,29.34,80,187.030801,0,187.030801,,,,2015-07-25 08:00,2015-08-03 16:00,,2015-05-24 08:00,2015-06-03 16:00,2015-05-24 08:00,2015-06-03 16:00,2015-05-24 08:00,2015-06-03 16:00,2015-07-25 08:00,2015-08-03 16:00,,PT_Normal,,,,,I9KSbsw46kCdgxPUDMHATg,z1C+3BDESKeqkJjqol+RwA,,,N,0,0,,,2014-04-05 12:28,2014-04-05 13:21,admin,admin,
2853,142596,1749,35678,642,0,N,N,N,CP_Drtn,TT_Task,DT_FixedDUR2,TK_NotStart,BL2-FN-3F-1040,Waterproofing,4433,488,0,40,0,7,7,40,136.282792,0,136.282792,,,,2015-08-04 08:00,2015-08-08 16:00,,2015-06-04 08:00,2015-06-08 16:00,2015-06-04 08:00,2015-06-08 16:00,2015-06-04 08:00,2015-06-08 16:00,2015-08-04 08:00,2015-08-08 16:00,,PT_Normal,,,,,VvdEGWMU+0OjSReoK86pgw,DMjPtKnmQHWebFwOGL6M7A,,,N,0,0,,,2014-04-05 12:28,2014-04-05 13:21,admin,admin,
2854,142597,1749,35678,642,0,N,N,N,CP_Drtn,TT_Task,DT_FixedDUR2,TK_NotStart,BL2-FN-3F-1060,Flooring Works,4433,488,0,160,0,1318,1318,160,30748.505221,0,30748.505221,,,,2015-08-09 08:00,2015-08-28 16:00,,2015-06-09 08:00,2015-06-28 16:00,2015-06-09 08:00,2015-06-28 16:00,2015-06-09 08:00,2015-06-28 16:00,2015-08-09 08:00,2015-08-28 16:00,,PT_Normal,,,,,eWFq5yqAMk6kP4pDfStiZQ,qbmhrTfiThe5tDubNsH1pQ,,,N,0,0,,,2014-04-05 12:28,2014-04-05 13:21,admin,admin,
2855,142598,1749,35678,642,0,N,N,N,CP_Drtn,TT_Task,DT_FixedDUR2,TK_NotStart,BL2-FN-3F-1100,Final Paint,,976,0,80,0,0,0,80,10,0,10,,,,2016-01-31 08:00,2016-02-09 16:00,,2015-10-01 08:00,2015-10-10 16:00,2015-10-01 08:00,2015-10-10 16:00,2015-10-01 08:00,2015-10-10 16:00,2016-01-31 08:00,2016-02-09 16:00,,PT_Normal,,,,,xzDLPUvVH0GB/+F9j7/NOQ,V2kIgkxhRnKepGcXOktbbQ,,,N,0,0,,,2014-04-05 12:28,2014-04-05 13:21,admin,admin,
2856,142599,1749,35678,642,0,N,N,N,CP_Drtn,TT_Task,DT_FixedDUR2,TK_NotStart,BL2-FN-3F-1050,Wall Tiling,4433,632,144,80,0,1663.8,1663.8,80,7392.455384,0,7392.455384,,,,2015-08-22 08:00,2015-08-31 16:00,,2015-06-04 08:00,2015-06-13 16:00,2015-06-04 08:00,2015-06-13 16:00,2015-06-04 08:00,2015-06-13 16:00,2015-08-22 08:00,2015-08-31 16:00,,PT_Normal,,,,,KlNZyaWWZ0iefN3VjoJoWw,0YqdO/CMTmuvBo+n7CfqkQ,,,N,0,0,,,2014-04-05 12:28,2014-04-05 13:21,admin,admin,
2857,142600,1749,35678,642,0,N,N,N,CP_Drtn,TT_Task,DT_FixedDUR2,TK_NotStart,BL2-FN-3F-1070,False Ceiling,4433,488,0,120,0,5335,5335,120,44780.42198,0,44780.42198,,,,2015-09-01 08:00,2015-09-15 16:00,,2015-07-02 08:00,2015-07-16 16:00,2015-07-02 08:00,2015-07-16 16:00,2015-07-02 08:00,2015-07-16 16:00,2015-09-01 08:00,2015-09-15 16:00,,PT_Normal,,,,,g3oh+LJHzEGD0iCFbEaqjA,7La6LYACQDm3cXAduEBxCw,,,N,0,0,,,2014-04-05 12:28,2014-04-05 13:21,admin,admin,
2858,142601,1749,35678,642,0,N,N,N,CP_Drtn,TT_Task,DT_FixedDUR2,TK_NotStart,BL2-FN-3F-1080,Hand Rails for Stairs,4433,488,0,120,0,43,43,120,9498.792932,0,9498.792932,,,,2015-09-16 08:00,2015-09-30 16:00,,2015-07-17 08:00,2015-07-31 16:00,2015-07-17 08:00,2015-07-31 16:00,2015-07-17 08:00,2015-07-31 16:00,2015-09-16 08:00,2015-09-30 16:00,,PT_Normal,,,,,ECdthpNQjEqnXUR89o3I0Q,bNtnOJgoSvKA4nal8PCUTA,,,N,0,0,,,2014-04-05 12:28,2014-04-05 13:21,admin,admin,
2859,142602,1749,35678,642,0,N,N,N,CP_Drtn,TT_Task,DT_FixedDUR2,TK_NotStart,BL2-FN-3F-1090,Doors Installation,,488,0,120,0,0,0,120,26005.108727,0,26005.108727,,,,2015-10-01 08:00,2015-10-15 16:00,,2015-08-01 08:00,2015-08-15 16:00,2015-08-01 08:00,2015-08-15 16:00,2015-08-01 08:00,2015-08-15 16:00,2015-10-01 08:00,2015-10-15 16:00,,PT_Normal,,,,,bNZAW2GSRku4amKKxjse3g,k3i2JdyGQ6elo/tD80UyRA,,,N,0,0,,,2014-04-05 12:28,2014-04-05 13:21,admin,admin,
2860,142603,1749,35693,642,0,N,N,N,CP_Drtn,TT_Task,DT_FixedDUR2,TK_NotStart,BL2-ST-4F-1000,Reinforcement for Verticals,4433,192,0,40,0,842.201246,842.201246,40,56313.208727,0,56313.208727,,,,2015-02-17 08:00,2015-02-22 16:00,,2015-01-20 08:00,2015-01-25 16:00,2015-01-20 08:00,2015-01-25 16:00,2015-01-20 08:00,2015-01-25 16:00,2015-02-17 08:00,2015-02-22 16:00,,PT_Normal,,,,,gbj/D5AhKEmrpybfXCi4uA,MBfpDfekRfu5w2zlDgMDOQ,,,N,0,0,,,2014-04-05 12:28,2014-04-05 13:21,admin,admin,
2861,142604,1749,35693,642,0,N,N,N,CP_Drtn,TT_Task,DT_FixedDUR2,TK_NotStart,BL2-ST-4F-1020,FW for Verticals,4433,192,0,40,0,9250.408023,9250.408023,40,40673.84,0,40673.84,,,,2015-02-23 08:00,2015-02-28 16:00,,2015-01-26 08:00,2015-01-31 16:00,2015-01-26 08:00,2015-01-31 16:00,2015-01-26 08:00,2015-01-31 16:00,2015-02-23 08:00,2015-02-28 16:00,,PT_Normal,,,,,zR+i2DhI+UqKQrKTMZXZnw,WZSzri5RQ5Ki3XFXTZgA4Q,,,N,0,0,,,2014-04-05 12:28,2014-04-05 13:21,admin,admin,
2862,142605,1749,35693,642,0,N,N,N,CP_Drtn,TT_Task,DT_FixedDUR2,TK_NotStart,BL2-ST-4F-1030,Concrete Verticals,4433,192,0,8,0,2003.265215,2003.265215,8,33908.0695,0,33908.0695,,,,2015-03-01 08:00,2015-03-01 16:00,,2015-02-01 08:00,2015-02-01 16:00,2015-02-01 08:00,2015-02-01 16:00,2015-02-01 08:00,2015-02-01 16:00,2015-03-01 08:00,2015-03-01 16:00,,PT_Normal,,,,,nDc72eO+0Uic+NjPjNKqfw,y3ZjLZh6TImIQf9WMMK1TQ,,,N,0,0,,,2014-04-05 12:28,2014-04-05 13:21,admin,admin,
2863,142606,1749,35693,642,0,N,N,N,CP_Drtn,TT_Task,DT_FixedDUR2,TK_NotStart,BL2-ST-4F-1040,FW for Slab,4433,192,0,40,0,16202.380057,16202.380057,40,71237.75,0,71237.75,,,,2015-03-02 08:00,2015-03-07 16:00,,2015-02-02 08:00,2015-02-07 16:00,2015-02-02 08:00,2015-02-07 16:00,2015-02-02 08:00,2015-02-07 16:00,2015-03-02 08:00,2015-03-07 16:00,,PT_Normal,,,,,/KMPBEW55ECgQJZKBC801w,6HK0uDlLSeaqAk5DdS3kEQ,,,N,0,0,,,2014-04-05 12:28,2014-04-05 13:21,admin,admin,
2864,142607,1749,35693,642,0,N,N,N,CP_Drtn,TT_Task,DT_FixedDUR2,TK_NotStart,BL2-ST-4F-1050,Reinforcement for Slab,4433,192,0,40,0,1629.170164,1629.170164,40,108928.6736,0,108928.6736,,,,2015-03-08 08:00,2015-03-12 16:00,,2015-02-08 08:00,2015-02-12 16:00,2015-02-08 08:00,2015-02-12 16:00,2015-02-08 08:00,2015-02-12 16:00,2015-03-08 08:00,2015-03-12 16:00,,PT_Normal,,,,,nF4uvkYxW0+nQzJP+nacRw,LTuTL7yqTB+kXOj+calTlA,,,N,0,0,,,2014-04-05 12:28,2014-04-05 13:21,admin,admin,
2865,142608,1749,35693,642,0,N,N,N,CP_Drtn,TT_Task,DT_FixedDUR2,TK_NotStart,BL2-ST-4F-1070,Concrete for Slab,4433,192,0,8,0,4319.680781,4319.680781,8,73115.491,0,73115.491,,,,2015-03-14 08:00,2015-03-14 16:00,,2015-02-14 08:00,2015-02-14 16:00,2015-02-14 08:00,2015-02-14 16:00,2015-02-14 08:00,2015-02-14 16:00,2015-03-14 08:00,2015-03-14 16:00,,PT_Normal,,,,,yKga/Tkyi0aKJgEafOekEg,g5WCzwvSR32XtP4JpKOKUQ,,,N,0,0,,,2014-04-05 12:28,2014-04-05 13:21,admin,admin,
2866,142609,1749,35693,642,0,N,N,N,CP_Drtn,TT_Task,DT_FixedDUR2,TK_NotStart,BL2-ST-4F-1010,MEP Works in Vertical Element,,232,40,40,0,160,160,40,1803.546829,0,1803.546829,,,,2015-02-23 08:00,2015-02-28 16:00,,2015-01-20 08:00,2015-01-25 16:00,2015-01-20 08:00,2015-01-25 16:00,2015-01-20 08:00,2015-01-25 16:00,2015-02-23 08:00,2015-02-28 16:00,,PT_Normal,,,,,XXfPsAnbf0WywZ06tpczqw,88xrIdhQTaWPqBzgUhjrjw,,,N,0,0,,,2014-04-05 12:28,2014-04-05 13:21,admin,admin,
2867,142610,1749,35693,642,0,N,N,N,CP_Drtn,TT_Task,DT_FixedDUR2,TK_NotStart,BL2-ST-4F-1060,MEP Works in Slab & Beams,,192,0,40,0,320,320,40,3354.018234,0,3354.018234,,,,2015-03-08 08:00,2015-03-12 16:00,,2015-02-08 08:00,2015-02-12 16:00,2015-02-08 08:00,2015-02-12 16:00,2015-02-08 08:00,2015-02-12 16:00,2015-03-08 08:00,2015-03-12 16:00,,PT_Normal,,,,,PlWjDuZIT0WiNTHXg1tqlQ,cP+SplxqTJ2mKJlN0Cf0dQ,,,N,0,0,,,2014-04-05 12:28,2014-04-05 13:21,admin,admin,
2868,142611,1749,35683,642,0,N,N,N,CP_Drtn,TT_Task,DT_FixedDUR2,TK_NotStart,BL2-FN-4F-1000,Block Works,4433,408,0,168,0,1993,1993,168,26519.959378,0,26519.959378,,,,2015-06-05 08:00,2015-06-25 16:00,,2015-04-07 08:00,2015-04-30 16:00,2015-04-07 08:00,2015-04-30 16:00,2015-04-07 08:00,2015-04-30 16:00,2015-06-05 08:00,2015-06-25 16:00,,PT_Normal,,,,,c2lwCxdfREuRD1aHwgA4RQ,3wtv3DFHTnq31mE+jnK+HA,,,N,0,0,,,2014-04-05 12:28,2014-04-05 13:21,admin,admin,
2869,142612,1749,35683,642,0,N,N,N,CP_Drtn,TT_Task,DT_FixedDUR2,TK_NotStart,BL2-FN-4F-1010,Plaster,4433,408,0,152,0,3122,3122,152,36717.891578,0,36717.891578,,,,2015-07-08 08:00,2015-07-26 16:00,,2015-05-16 08:00,2015-06-05 16:00,2015-05-16 08:00,2015-06-05 16:00,2015-05-16 08:00,2015-06-05 16:00,2015-07-08 08:00,2015-07-26 16:00,,PT_Normal,,,,,rbjE3Mv540uNJOTR9iv06w,sDY9FvhOTJq//uqU8uf2jQ,,,N,0,0,,,2014-04-05 12:28,2014-04-05 13:21,admin,admin,
2870,142613,1749,35683,642,0,N,N,N,CP_Drtn,TT_Task,DT_FixedDUR2,TK_NotStart,BL2-FN-4F-1020,Paint 1st Coat,4433,432,0,120,0,312.2,312.2,120,5666.888979,0,5666.888979,,,,2015-07-30 08:00,2015-08-13 16:00,,2015-06-06 08:00,2015-06-20 16:00,2015-06-06 08:00,2015-06-20 16:00,2015-06-06 08:00,2015-06-20 16:00,2015-07-30 08:00,2015-08-13 16:00,,PT_Normal,,,,,bmZo/aeTE0K1DFtP8oGCPQ,O39bALQlTSG83cdRruqEtg,,,N,0,0,,,2014-04-05 12:28,2014-04-05 13:21,admin,admin,
2871,142614,1749,35683,642,0,N,N,N,CP_Drtn,TT_Task,DT_FixedDUR2,TK_NotStart,BL2-FN-4F-1030,Ceiling Paint,4433,432,0,80,0,29.34,29.34,80,187.030801,0,187.030801,,,,2015-08-09 08:00,2015-08-18 16:00,,2015-06-16 08:00,2015-06-25 16:00,2015-06-16 08:00,2015-06-25 16:00,2015-06-16 08:00,2015-06-25 16:00,2015-08-09 08:00,2015-08-18 16:00,,PT_Normal,,,,,POUeEmSW5ECxEraCAyXD9g,rncPTJYwSnq7gY6NBBUf9Q,,,N,0,0,,,2014-04-05 12:28,2014-04-05 13:21,admin,admin,
2872,142615,1749,35683,642,0,N,N,N,CP_Drtn,TT_Task,DT_FixedDUR2,TK_NotStart,BL2-FN-4F-1040,Waterproofing,4433,432,0,40,0,7,7,40,136.282792,0,136.282792,,,,2015-08-19 08:00,2015-08-23 16:00,,2015-06-26 08:00,2015-06-30 16:00,2015-06-26 08:00,2015-06-30 16:00,2015-06-26 08:00,2015-06-30 16:00,2015-08-19 08:00,2015-08-23 16:00,,PT_Normal,,,,,rK1ospEYzkuOp3txQfBPMA,117w1hDNRVuE+01QIzieLA,,,N,0,0,,,2014-04-05 12:28,2014-04-05 13:21,admin,admin,
2873,142616,1749,35683,642,0,N,N,N,CP_Drtn,TT_Task,DT_FixedDUR2,TK_NotStart,BL2-FN-4F-1060,Flooring Works,4433,432,0,160,0,1318,1318,160,30748.505221,0,30748.505221,,,,2015-08-24 08:00,2015-09-12 16:00,,2015-07-01 08:00,2015-07-20 16:00,2015-07-01 08:00,2015-07-20 16:00,2015-07-01 08:00,2015-07-20 16:00,2015-08-24 08:00,2015-09-12 16:00,,PT_Normal,,,,,9RfZ3VRgPEu6/ZfremIfRQ,d1TJ8HowQsyLQrsJVspkuw,,,N,0,0,,,2014-04-05 12:28,2014-04-05 13:21,admin,admin,
2874,142617,1749,35683,642,0,N,N,N,CP_Drtn,TT_Task,DT_FixedDUR2,TK_NotStart,BL2-FN-4F-1100,Final Paint,,944,0,80,0,0,0,80,10,0,10,,,,2016-02-02 08:00,2016-02-11 16:00,,2015-10-07 08:00,2015-10-16 16:00,2015-10-07 08:00,2015-10-16 16:00,2015-10-07 08:00,2015-10-16 16:00,2016-02-02 08:00,2016-02-11 16:00,,PT_Normal,,,,,n+XIDNpBjUmscTRHUaciVw,uZilP3CrReil6Tu3dP4oWg,,,N,0,0,,,2014-04-05 12:28,2014-04-05 13:21,admin,admin,
2875,142618,1749,35683,642,0,N,N,N,CP_Drtn,TT_Task,DT_FixedDUR2,TK_NotStart,BL2-FN-4F-1050,Wall Tiling,4433,576,144,80,0,1663.8,1663.8,80,7392.455384,0,7392.455384,,,,2015-09-06 08:00,2015-09-15 16:00,,2015-06-26 08:00,2015-07-05 16:00,2015-06-26 08:00,2015-07-05 16:00,2015-06-26 08:00,2015-07-05 16:00,2015-09-06 08:00,2015-09-15 16:00,,PT_Normal,,,,,bzU/mC2DiES5Xz3BcJAseA,Nj3b+8ZhSOeUi0Eocx2kIA,,,N,0,0,,,2014-04-05 12:28,2014-04-05 13:21,admin,admin,
2876,142619,1749,35683,642,0,N,N,N,CP_Drtn,TT_Task,DT_FixedDUR2,TK_NotStart,BL2-FN-4F-1070,False Ceiling,4433,432,0,120,0,6335,6335,120,49548,0,49548,,,,2015-09-16 08:00,2015-09-30 16:00,,2015-07-24 08:00,2015-08-07 16:00,2015-07-24 08:00,2015-08-07 16:00,2015-07-24 08:00,2015-08-07 16:00,2015-09-16 08:00,2015-09-30 16:00,,PT_Normal,,,,,cCr1/CfD+E2A7ZJNv6EZvg,goouuwrSRBqH0BrEbk5MWw,,,N,0,0,,,2014-04-05 12:28,2014-04-05 13:21,admin,admin,
2877,142620,1749,35683,642,0,N,N,N,CP_Drtn,TT_Task,DT_FixedDUR2,TK_NotStart,BL2-FN-4F-1080,Hand Rails for Stairs,4433,432,0,120,0,43,43,120,9498.792932,0,9498.792932,,,,2015-10-01 08:00,2015-10-15 16:00,,2015-08-08 08:00,2015-08-22 16:00,2015-08-08 08:00,2015-08-22 16:00,2015-08-08 08:00,2015-08-22 16:00,2015-10-01 08:00,2015-10-15 16:00,,PT_Normal,,,,,zEipSPNAgUifXayYXjYeFQ,riPd26hGQx+gui17B1YfTw,,,N,0,0,,,2014-04-05 12:28,2014-04-05 13:21,admin,admin,
2878,142621,1749,35683,642,0,N,N,N,CP_Drtn,TT_Task,DT_FixedDUR2,TK_NotStart,BL2-FN-4F-1090,Doors Installation,,432,0,120,0,0,0,120,26005.108727,0,26005.108727,,,,2015-10-16 08:00,2015-10-30 16:00,,2015-08-23 08:00,2015-09-06 16:00,2015-08-23 08:00,2015-09-06 16:00,2015-08-23 08:00,2015-09-06 16:00,2015-10-16 08:00,2015-10-30 16:00,,PT_Normal,,,,,YMyvX3scKEeOd3aa7tb0VQ,xIpA5UZiTXifG9JVd9LT/g,,,N,0,0,,,2014-04-05 12:28,2014-04-05 13:21,admin,admin,
2879,142622,1749,35745,642,0,N,N,N,CP_Drtn,TT_Task,DT_FixedDUR2,TK_NotStart,BL2-ST-5F-1000,Reinforcement for Verticals,4433,192,0,40,0,842.201246,842.201246,40,56313.208727,0,56313.208727,,,,2015-03-15 08:00,2015-03-19 16:00,,2015-02-15 08:00,2015-02-19 16:00,2015-02-15 08:00,2015-02-19 16:00,2015-02-15 08:00,2015-02-19 16:00,2015-03-15 08:00,2015-03-19 16:00,,PT_Normal,,,,,3pEjcqWTdk+CVSkn5LgllQ,HB+yWFE5Tmi5fM20trXW0w,,,N,0,0,,,2014-04-05 12:28,2014-04-05 13:21,admin,admin,
2880,142623,1749,35745,642,0,N,N,N,CP_Drtn,TT_Task,DT_FixedDUR2,TK_NotStart,BL2-ST-5F-1020,FW for Verticals,4433,192,0,40,0,9250.408023,9250.408023,40,40673.84,0,40673.84,,,,2015-03-21 08:00,2015-03-25 16:00,,2015-02-21 08:00,2015-02-25 16:00,2015-02-21 08:00,2015-02-25 16:00,2015-02-21 08:00,2015-02-25 16:00,2015-03-21 08:00,2015-03-25 16:00,,PT_Normal,,,,,cepdjsGQN0G2t9/8ScndbQ,cHZhgWJ1RpOobaRW72Pl2w,,,N,0,0,,,2014-04-05 12:28,2014-04-05 13:21,admin,admin,
2881,142624,1749,35745,642,0,N,N,N,CP_Drtn,TT_Task,DT_FixedDUR2,TK_NotStart,BL2-ST-5F-1030,Concrete Verticals,4433,192,0,8,0,2003.265215,2003.265215,8,33908.0695,0,33908.0695,,,,2015-03-26 08:00,2015-03-26 16:00,,2015-02-26 08:00,2015-02-26 16:00,2015-02-26 08:00,2015-02-26 16:00,2015-02-26 08:00,2015-02-26 16:00,2015-03-26 08:00,2015-03-26 16:00,,PT_Normal,,,,,HFSewfIdCEeeAT3cPpOdJg,G/86QdoTSS+0+8R4IdAniQ,,,N,0,0,,,2014-04-05 12:28,2014-04-05 13:21,admin,admin,
2882,142625,1749,35745,642,0,N,N,N,CP_Drtn,TT_Task,DT_FixedDUR2,TK_NotStart,BL2-ST-5F-1040,FW for Slab,4433,192,0,40,0,16202.380057,16202.380057,40,71237.75,0,71237.75,,,,2015-03-28 08:00,2015-04-01 16:00,,2015-02-28 08:00,2015-03-04 16:00,2015-02-28 08:00,2015-03-04 16:00,2015-02-28 08:00,2015-03-04 16:00,2015-03-28 08:00,2015-04-01 16:00,,PT_Normal,,,,,AJj4TgoQw0C1gL85L7A1Bg,GZ02QVQrSNGodk/8S1jbDQ,,,N,0,0,,,2014-04-05 12:28,2014-04-05 13:21,admin,admin,
2883,142626,1749,35745,642,0,N,N,N,CP_Drtn,TT_Task,DT_FixedDUR2,TK_NotStart,BL2-ST-5F-1050,Reinforcement for Slab,4433,192,0,40,0,1629.170164,1629.170164,40,108928.6736,0,108928.6736,,,,2015-04-02 08:00,2015-04-07 16:00,,2015-03-05 08:00,2015-03-10 16:00,2015-03-05 08:00,2015-03-10 16:00,2015-03-05 08:00,2015-03-10 16:00,2015-04-02 08:00,2015-04-07 16:00,,PT_Normal,,,,,66TB9p4HtEqKLOmH9pMu4g,wbvZMXMLSfaKbs4tTRbOEA,,,N,0,0,,,2014-04-05 12:28,2014-04-05 13:21,admin,admin,
2884,142627,1749,35745,642,0,N,N,N,CP_Drtn,TT_Task,DT_FixedDUR2,TK_NotStart,BL2-ST-5F-1070,Concrete for Slab,4433,192,0,8,0,4319.680781,4319.680781,8,73115.491,0,73115.491,,,,2015-04-08 08:00,2015-04-08 16:00,,2015-03-11 08:00,2015-03-11 16:00,2015-03-11 08:00,2015-03-11 16:00,2015-03-11 08:00,2015-03-11 16:00,2015-04-08 08:00,2015-04-08 16:00,,PT_Normal,,,,,CeCd8nQCvU2nA6ZMViyl6g,z578GFisR2WOysP/KbaKBQ,,,N,0,0,,,2014-04-05 12:28,2014-04-05 13:21,admin,admin,
2885,142628,1749,35745,642,0,N,N,N,CP_Drtn,TT_Task,DT_FixedDUR2,TK_NotStart,BL2-ST-5F-1010,MEP Works in Vertical Element,,232,40,40,0,160,160,40,1803.546829,0,1803.546829,,,,2015-03-21 08:00,2015-03-25 16:00,,2015-02-15 08:00,2015-02-19 16:00,2015-02-15 08:00,2015-02-19 16:00,2015-02-15 08:00,2015-02-19 16:00,2015-03-21 08:00,2015-03-25 16:00,,PT_Normal,,,,,uIPLKSrs2kKv1iBz5wLxGA,PsSLKDZISUulAzSiHABOvw,,,N,0,0,,,2014-04-05 12:28,2014-04-05 13:21,admin,admin,
2886,142629,1749,35745,642,0,N,N,N,CP_Drtn,TT_Task,DT_FixedDUR2,TK_NotStart,BL2-ST-5F-1060,MEP Works in Slab & Beams,,192,0,40,0,320,320,40,3354.018234,0,3354.018234,,,,2015-04-02 08:00,2015-04-07 16:00,,2015-03-05 08:00,2015-03-10 16:00,2015-03-05 08:00,2015-03-10 16:00,2015-03-05 08:00,2015-03-10 16:00,2015-04-02 08:00,2015-04-07 16:00,,PT_Normal,,,,,RvzbIJ2lyUOe+ZyWcobf4A,NuX5gRAgT5WFvLz6PaU8Sg,,,N,0,0,,,2014-04-05 12:28,2014-04-05 13:21,admin,admin,
2887,142630,1749,35717,642,0,N,N,N,CP_Drtn,TT_Task,DT_FixedDUR2,TK_NotStart,BL2-FN-5F-1000,Block Works,4433,376,0,168,0,1993,1993,168,26519.959378,0,26519.959378,,,,2015-06-23 08:00,2015-07-13 16:00,,2015-05-03 08:00,2015-05-26 16:00,2015-05-03 08:00,2015-05-26 16:00,2015-05-03 08:00,2015-05-26 16:00,2015-06-23 08:00,2015-07-13 16:00,,PT_Normal,,,,,8ev0jOupg0Wv7ls+di7G6g,Sa4OmP2uSWOF0kV/IRdmew,,,N,0,0,,,2014-04-05 12:28,2014-04-05 13:21,admin,admin,
2888,142631,1749,35717,642,0,N,N,N,CP_Drtn,TT_Task,DT_FixedDUR2,TK_NotStart,BL2-FN-5F-1010,Plaster,4433,376,0,152,0,3122,3122,152,36717.891578,0,36717.891578,,,,2015-07-26 08:00,2015-08-13 16:00,,2015-06-09 08:00,2015-06-27 16:00,2015-06-09 08:00,2015-06-27 16:00,2015-06-09 08:00,2015-06-27 16:00,2015-07-26 08:00,2015-08-13 16:00,,PT_Normal,,,,,vgHcPWCSi0ODPhRlORSlLw,ACLJJGFmT2SrgSOoHezNNQ,,,N,0,0,,,2014-04-05 12:28,2014-04-05 13:21,admin,admin,
2889,142632,1749,35717,642,0,N,N,N,CP_Drtn,TT_Task,DT_FixedDUR2,TK_NotStart,BL2-FN-5F-1020,Paint 1st Coat,4433,376,0,120,0,312.2,312.2,120,5666.888979,0,5666.888979,,,,2015-08-14 08:00,2015-08-28 16:00,,2015-06-28 08:00,2015-07-12 16:00,2015-06-28 08:00,2015-07-12 16:00,2015-06-28 08:00,2015-07-12 16:00,2015-08-14 08:00,2015-08-28 16:00,,PT_Normal,,,,,xghcdU+OlkSCrNfz+d0weA,4biV7Yt7QuuGHc6t0McZ9w,,,N,0,0,,,2014-04-05 12:28,2014-04-05 13:21,admin,admin,
2890,142633,1749,35717,642,0,N,N,N,CP_Drtn,TT_Task,DT_FixedDUR2,TK_NotStart,BL2-FN-5F-1030,Ceiling Paint,4433,376,0,80,0,29.34,29.34,80,187.030801,0,187.030801,,,,2015-08-24 08:00,2015-09-02 16:00,,2015-07-08 08:00,2015-07-17 16:00,2015-07-08 08:00,2015-07-17 16:00,2015-07-08 08:00,2015-07-17 16:00,2015-08-24 08:00,2015-09-02 16:00,,PT_Normal,,,,,EeYEqEGzqEyo9McqBUlPOA,GIBOnNlKQ1OFl/vneINdHA,,,N,0,0,,,2014-04-05 12:28,2014-04-05 13:21,admin,admin,
2891,142634,1749,35717,642,0,N,N,N,CP_Drtn,TT_Task,DT_FixedDUR2,TK_NotStart,BL2-FN-5F-1040,Waterproofing,4433,376,0,40,0,7,7,40,136.282792,0,136.282792,,,,2015-09-03 08:00,2015-09-07 16:00,,2015-07-18 08:00,2015-07-22 16:00,2015-07-18 08:00,2015-07-22 16:00,2015-07-18 08:00,2015-07-22 16:00,2015-09-03 08:00,2015-09-07 16:00,,PT_Normal,,,,,tFAJ0s6il0SlgsLTA+4TOw,wbKaCSrYQFmz4k6uoda3BQ,,,N,0,0,,,2014-04-05 12:28,2014-04-05 13:21,admin,admin,
2892,142635,1749,35717,642,0,N,N,N,CP_Drtn,TT_Task,DT_FixedDUR2,TK_NotStart,BL2-FN-5F-1060,Flooring Works,4433,376,0,160,0,1318,1318,160,30748.505221,0,30748.505221,,,,2015-09-08 08:00,2015-09-27 16:00,,2015-07-23 08:00,2015-08-11 16:00,2015-07-23 08:00,2015-08-11 16:00,2015-07-23 08:00,2015-08-11 16:00,2015-09-08 08:00,2015-09-27 16:00,,PT_Normal,,,,,WCCq1kz23USi0dVtB/CvAQ,ppMBwbtYSCyN7Xsn8oi0Gw,,,N,0,0,,,2014-04-05 12:28,2014-04-05 13:21,admin,admin,
2893,142636,1749,35717,642,0,N,N,N,CP_Drtn,TT_Task,DT_FixedDUR2,TK_NotStart,BL2-FN-5F-1100,Final Paint,,912,0,80,0,0,0,80,10,0,10,,,,2016-02-04 08:00,2016-02-13 16:00,,2015-10-13 08:00,2015-10-22 16:00,2015-10-13 08:00,2015-10-22 16:00,2015-10-13 08:00,2015-10-22 16:00,2016-02-04 08:00,2016-02-13 16:00,,PT_Normal,,,,,Z5LPU7HtVUaB/AE3tgOISg,95bra+NhQmCLi6ja8sijXA,,,N,0,0,,,2014-04-05 12:28,2014-04-05 13:21,admin,admin,
2894,142637,1749,35717,642,0,N,N,N,CP_Drtn,TT_Task,DT_FixedDUR2,TK_NotStart,BL2-FN-5F-1050,Wall Tiling,4433,520,144,80,0,1663.8,1663.8,80,7392.455384,0,7392.455384,,,,2015-09-21 08:00,2015-09-30 16:00,,2015-07-18 08:00,2015-07-27 16:00,2015-07-18 08:00,2015-07-27 16:00,2015-07-18 08:00,2015-07-27 16:00,2015-09-21 08:00,2015-09-30 16:00,,PT_Normal,,,,,euGgyr603UWveKxFNr++sw,SoH2y2JVS/WMiORsLQBiog,,,N,0,0,,,2014-04-05 12:28,2014-04-05 13:21,admin,admin,
2895,142638,1749,35717,642,0,N,N,N,CP_Drtn,TT_Task,DT_FixedDUR2,TK_NotStart,BL2-FN-5F-1070,False Ceiling,4433,376,0,120,0,6335,6335,120,54780,0,54780,,,,2015-10-01 08:00,2015-10-15 16:00,,2015-08-15 08:00,2015-08-29 16:00,2015-08-15 08:00,2015-08-29 16:00,2015-08-15 08:00,2015-08-29 16:00,2015-10-01 08:00,2015-10-15 16:00,,PT_Normal,,,,,uJc/sbSIGEmJdOpJ7xEs3Q,lKRf2ak8R92/Hgq7CTbByg,,,N,0,0,,,2014-04-05 12:28,2014-04-05 13:21,admin,admin,
2896,142639,1749,35717,642,0,N,N,N,CP_Drtn,TT_Task,DT_FixedDUR2,TK_NotStart,BL2-FN-5F-1080,Hand Rails for Stairs,4433,376,0,120,0,43,43,120,9498.792932,0,9498.792932,,,,2015-10-16 08:00,2015-10-30 16:00,,2015-08-30 08:00,2015-09-13 16:00,2015-08-30 08:00,2015-09-13 16:00,2015-08-30 08:00,2015-09-13 16:00,2015-10-16 08:00,2015-10-30 16:00,,PT_Normal,,,,,m2r0KaFWVEWFgydJZfG3tA,mWI1siJpTO6SF/9P9Ky8jg,,,N,0,0,,,2014-04-05 12:28,2014-04-05 13:21,admin,admin,
2897,142640,1749,35717,642,0,N,N,N,CP_Drtn,TT_Task,DT_FixedDUR2,TK_NotStart,BL2-FN-5F-1090,Doors Installation,,376,0,120,0,0,0,120,26005.108727,0,26005.108727,,,,2015-10-31 08:00,2015-11-14 16:00,,2015-09-14 08:00,2015-09-28 16:00,2015-09-14 08:00,2015-09-28 16:00,2015-09-14 08:00,2015-09-28 16:00,2015-10-31 08:00,2015-11-14 16:00,,PT_Normal,,,,,Z8NKpE9PuUaHsl5JmPZCCA,v6thzzzFR6WaGKyQFgr+3A,,,N,0,0,,,2014-04-05 12:28,2014-04-05 13:21,admin,admin,
2898,142641,1749,35755,642,0,N,N,N,CP_Drtn,TT_Task,DT_FixedDUR2,TK_NotStart,BL2-ST-6F-1000,Reinforcement for Verticals,4433,192,0,40,0,842.201246,842.201246,40,56313.208727,0,56313.208727,,,,2015-04-09 08:00,2015-04-14 16:00,,2015-03-12 08:00,2015-03-17 16:00,2015-03-12 08:00,2015-03-17 16:00,2015-03-12 08:00,2015-03-17 16:00,2015-04-09 08:00,2015-04-14 16:00,,PT_Normal,,,,,aew2DJ9VAUaXPgeLYkYcDw,Fpm77pVXTiuzCLKfA3YZ1w,,,N,0,0,,,2014-04-05 12:28,2014-04-05 13:21,admin,admin,
2899,142642,1749,35755,642,0,N,N,N,CP_Drtn,TT_Task,DT_FixedDUR2,TK_NotStart,BL2-ST-6F-1020,FW for Verticals,4433,192,0,40,0,9250.408023,9250.408023,40,40673.84,0,40673.84,,,,2015-04-15 08:00,2015-04-20 16:00,,2015-03-18 08:00,2015-03-23 16:00,2015-03-18 08:00,2015-03-23 16:00,2015-03-18 08:00,2015-03-23 16:00,2015-04-15 08:00,2015-04-20 16:00,,PT_Normal,,,,,cSfhWf7l/EeSTR3KkwUkdA,xyOs1BY5ReCC+Io1Swthjw,,,N,0,0,,,2014-04-05 12:28,2014-04-05 13:21,admin,admin,
2900,142643,1749,35755,642,0,N,N,N,CP_Drtn,TT_Task,DT_FixedDUR2,TK_NotStart,BL2-ST-6F-1030,Concrete Verticals,4433,192,0,8,0,2003.265215,2003.265215,8,33908.0695,0,33908.0695,,,,2015-04-21 08:00,2015-04-21 16:00,,2015-03-24 08:00,2015-03-24 16:00,2015-03-24 08:00,2015-03-24 16:00,2015-03-24 08:00,2015-03-24 16:00,2015-04-21 08:00,2015-04-21 16:00,,PT_Normal,,,,,Y3uj7YftpUG9coKb33rIyQ,3d8/dr3oRVK1PgoRlOLVuw,,,N,0,0,,,2014-04-05 12:28,2014-04-05 13:21,admin,admin,
2901,142644,1749,35755,642,0,N,N,N,CP_Drtn,TT_Task,DT_FixedDUR2,TK_NotStart,BL2-ST-6F-1040,FW for Slab,4433,192,0,40,0,16202.380057,16202.380057,40,71237.75,0,71237.75,,,,2015-04-22 08:00,2015-04-27 16:00,,2015-03-25 08:00,2015-03-30 16:00,2015-03-25 08:00,2015-03-30 16:00,2015-03-25 08:00,2015-03-30 16:00,2015-04-22 08:00,2015-04-27 16:00,,PT_Normal,,,,,pCgpk6/iw0K7tKWdWKoc/A,kBr7QjGwSC6dYn1+wB63TA,,,N,0,0,,,2014-04-05 12:28,2014-04-05 13:21,admin,admin,
2902,142645,1749,35755,642,0,N,N,N,CP_Drtn,TT_Task,DT_FixedDUR2,TK_NotStart,BL2-ST-6F-1050,Reinforcement for Slab,4433,192,0,40,0,1629.170164,1629.170164,40,108928.6736,0,108928.6736,,,,2015-04-28 08:00,2015-05-03 16:00,,2015-03-31 08:00,2015-04-05 16:00,2015-03-31 08:00,2015-04-05 16:00,2015-03-31 08:00,2015-04-05 16:00,2015-04-28 08:00,2015-05-03 16:00,,PT_Normal,,,,,4mPJotmFUEG/vNVargTcVw,DrpFHWGDRDCIeYrU107M/g,,,N,0,0,,,2014-04-05 12:28,2014-04-05 13:21,admin,admin,
2903,142646,1749,35755,642,0,N,N,N,CP_Drtn,TT_Task,DT_FixedDUR2,TK_NotStart,BL2-ST-6F-1070,Concrete for Slab,4433,192,0,8,0,4319.680781,4319.680781,8,73115.491,0,73115.491,,,,2015-05-04 08:00,2015-05-04 16:00,,2015-04-06 08:00,2015-04-06 16:00,2015-04-06 08:00,2015-04-06 16:00,2015-04-06 08:00,2015-04-06 16:00,2015-05-04 08:00,2015-05-04 16:00,,PT_Normal,,,,,KqjcL/yrHkuH7z0QWMKUTA,P3g1NlWlQxmNx2zPz5ZlsA,,,N,0,0,,,2014-04-05 12:28,2014-04-05 13:21,admin,admin,
2904,142647,1749,35755,642,0,N,N,N,CP_Drtn,TT_Task,DT_FixedDUR2,TK_NotStart,BL2-ST-6F-1010,MEP Works in Vertical Element,,232,40,40,0,160,160,40,1803.546829,0,1803.546829,,,,2015-04-15 08:00,2015-04-20 16:00,,2015-03-12 08:00,2015-03-17 16:00,2015-03-12 08:00,2015-03-17 16:00,2015-03-12 08:00,2015-03-17 16:00,2015-04-15 08:00,2015-04-20 16:00,,PT_Normal,,,,,WFRTCfIfWEmDLi0RlJTUew,tTKrEN4bTiKBxlJWgHNTGQ,,,N,0,0,,,2014-04-05 12:28,2014-04-05 13:21,admin,admin,
2905,142648,1749,35755,642,0,N,N,N,CP_Drtn,TT_Task,DT_FixedDUR2,TK_NotStart,BL2-ST-6F-1060,MEP Works in Slab & Beams,,192,0,40,0,320,320,40,3354.018234,0,3354.018234,,,,2015-04-28 08:00,2015-05-03 16:00,,2015-03-31 08:00,2015-04-05 16:00,2015-03-31 08:00,2015-04-05 16:00,2015-03-31 08:00,2015-04-05 16:00,2015-04-28 08:00,2015-05-03 16:00,,PT_Normal,,,,,1etEoxw1qEC+Cjs/Em4irw,9214WszhQnWPY2G6HDZ35w,,,N,0,0,,,2014-04-05 12:28,2014-04-05 13:21,admin,admin,
2906,142649,1749,35845,642,0,N,N,N,CP_Drtn,TT_Task,DT_FixedDUR2,TK_NotStart,BL2-FN-6F-1000,Block Works,4433,304,0,168,0,1993,1993,168,26519.959378,0,26519.959378,,,,2015-07-06 08:00,2015-07-26 16:00,,2015-05-28 08:00,2015-06-18 16:00,2015-05-28 08:00,2015-06-18 16:00,2015-05-28 08:00,2015-06-18 16:00,2015-07-06 08:00,2015-07-26 16:00,,PT_Normal,,,,,Uwsl0Z+d4kO3ovIh74PDxQ,WiChf7vAQy6swAhOr29Zfg,,,N,0,0,,,2014-04-05 12:28,2014-04-05 13:21,admin,admin,
2907,142650,1749,35845,642,0,N,N,N,CP_Drtn,TT_Task,DT_FixedDUR2,TK_NotStart,BL2-FN-6F-1010,Plaster,4433,320,0,152,0,3122,3122,152,36717.891578,0,36717.891578,,,,2015-08-10 08:00,2015-08-28 16:00,,2015-07-01 08:00,2015-07-19 16:00,2015-07-01 08:00,2015-07-19 16:00,2015-07-01 08:00,2015-07-19 16:00,2015-08-10 08:00,2015-08-28 16:00,,PT_Normal,,,,,pKGD1vLMe0SCWrg/sFKlLg,QLpH77xmSp2CPoDQnuXU8w,,,N,0,0,,,2014-04-05 12:28,2014-04-05 13:21,admin,admin,
2908,142651,1749,35845,642,0,N,N,N,CP_Drtn,TT_Task,DT_FixedDUR2,TK_NotStart,BL2-FN-6F-1020,Paint 1st Coat,4433,320,0,120,0,312.2,312.2,120,5666.888979,0,5666.888979,,,,2015-08-29 08:00,2015-09-12 16:00,,2015-07-20 08:00,2015-08-03 16:00,2015-07-20 08:00,2015-08-03 16:00,2015-07-20 08:00,2015-08-03 16:00,2015-08-29 08:00,2015-09-12 16:00,,PT_Normal,,,,,H/B7fgT0gkug+eSxdfjBVA,itPiM1RLSYSTr96G33VJLQ,,,N,0,0,,,2014-04-05 12:28,2014-04-05 13:21,admin,admin,
2909,142652,1749,35845,642,0,N,N,N,CP_Drtn,TT_Task,DT_FixedDUR2,TK_NotStart,BL2-FN-6F-1030,Ceiling Paint,4433,320,0,80,0,29.34,29.34,80,187.030801,0,187.030801,,,,2015-09-08 08:00,2015-09-17 16:00,,2015-07-30 08:00,2015-08-08 16:00,2015-07-30 08:00,2015-08-08 16:00,2015-07-30 08:00,2015-08-08 16:00,2015-09-08 08:00,2015-09-17 16:00,,PT_Normal,,,,,9UGoGL6G1U2MsPqoV0bRzA,XA58Ja1qR8+aTcc77YC1uw,,,N,0,0,,,2014-04-05 12:28,2014-04-05 13:21,admin,admin,
2910,142653,1749,35845,642,0,N,N,N,CP_Drtn,TT_Task,DT_FixedDUR2,TK_NotStart,BL2-FN-6F-1040,Waterproofing,4433,320,0,40,0,7,7,40,136.282792,0,136.282792,,,,2015-09-18 08:00,2015-09-22 16:00,,2015-08-09 08:00,2015-08-13 16:00,2015-08-09 08:00,2015-08-13 16:00,2015-08-09 08:00,2015-08-13 16:00,2015-09-18 08:00,2015-09-22 16:00,,PT_Normal,,,,,ryfWCXDPj0+z47IX6CUWew,zw9RxeWxSs+symPtvLpv7A,,,N,0,0,,,2014-04-05 12:28,2014-04-05 13:21,admin,admin,
2911,142654,1749,35845,642,0,N,N,N,CP_Drtn,TT_Task,DT_FixedDUR2,TK_NotStart,BL2-FN-6F-1060,Flooring Works,4433,320,0,160,0,1318,1318,160,30748.505221,0,30748.505221,,,,2015-09-23 08:00,2015-10-12 16:00,,2015-08-14 08:00,2015-09-02 16:00,2015-08-14 08:00,2015-09-02 16:00,2015-08-14 08:00,2015-09-02 16:00,2015-09-23 08:00,2015-10-12 16:00,,PT_Normal,,,,,4/O+HxWYoE2t3+POMlEjcg,uooUKFo9QtmTXxNWQSuj+A,,,N,0,0,,,2014-04-05 12:28,2014-04-05 13:21,admin,admin,
2912,142655,1749,35845,642,0,N,N,N,CP_Drtn,TT_Task,DT_FixedDUR2,TK_NotStart,BL2-FN-6F-1100,Final Paint,,752,0,80,0,0,0,80,10,0,10,,,,2016-02-06 08:00,2016-02-15 16:00,,2015-11-04 08:00,2015-11-13 16:00,2015-11-04 08:00,2015-11-13 16:00,2015-11-04 08:00,2015-11-13 16:00,2016-02-06 08:00,2016-02-15 16:00,,PT_Normal,,,,,mntM4HRNJEqF+E/mw2FKqA,PFJ+A/oJRg2BkuMldEw0wQ,,,N,0,0,,,2014-04-05 12:28,2014-04-05 13:21,admin,admin,
2913,142656,1749,35845,642,0,N,N,N,CP_Drtn,TT_Task,DT_FixedDUR2,TK_NotStart,BL2-FN-6F-1050,Wall Tiling,4433,464,144,80,0,1663.8,1663.8,80,7392.455384,0,7392.455384,,,,2015-10-06 08:00,2015-10-15 16:00,,2015-08-09 08:00,2015-08-18 16:00,2015-08-09 08:00,2015-08-18 16:00,2015-08-09 08:00,2015-08-18 16:00,2015-10-06 08:00,2015-10-15 16:00,,PT_Normal,,,,,yyTFdNjbEkqDyXVV8p6/Qw,E1+Z2gpsT9Gi8IRq+geB2Q,,,N,0,0,,,2014-04-05 12:28,2014-04-05 13:21,admin,admin,
2914,142657,1749,35845,642,0,N,N,N,CP_Drtn,TT_Task,DT_FixedDUR2,TK_NotStart,BL2-FN-6F-1070,False Ceiling,4433,320,0,120,0,6335,6335,120,54780,0,54780,,,,2015-10-16 08:00,2015-10-30 16:00,,2015-09-06 08:00,2015-09-20 16:00,2015-09-06 08:00,2015-09-20 16:00,2015-09-06 08:00,2015-09-20 16:00,2015-10-16 08:00,2015-10-30 16:00,,PT_Normal,,,,,SWUPG5d3pUaUX1cmL009nQ,5aL/2u7cRYqXj+Ch5y4Yhw,,,N,0,0,,,2014-04-05 12:28,2014-04-05 13:21,admin,admin,
2915,142658,1749,35845,642,0,N,N,N,CP_Drtn,TT_Task,DT_FixedDUR2,TK_NotStart,BL2-FN-6F-1080,Hand Rails for Stairs,4433,320,0,120,0,43,43,120,9498.792932,0,9498.792932,,,,2015-10-31 08:00,2015-11-14 16:00,,2015-09-21 08:00,2015-10-05 16:00,2015-09-21 08:00,2015-10-05 16:00,2015-09-21 08:00,2015-10-05 16:00,2015-10-31 08:00,2015-11-14 16:00,,PT_Normal,,,,,kuFM+5/PMkuG20xzzl9eOg,ERAwCclqQZe6Cw4cb2gLFQ,,,N,0,0,,,2014-04-05 12:28,2014-04-05 13:21,admin,admin,
2916,142659,1749,35845,642,0,N,N,N,CP_Drtn,TT_Task,DT_FixedDUR2,TK_NotStart,BL2-FN-6F-1090,Doors Installation,,320,0,120,0,0,0,120,26005.108727,0,26005.108727,,,,2015-11-15 08:00,2015-11-29 16:00,,2015-10-06 08:00,2015-10-20 16:00,2015-10-06 08:00,2015-10-20 16:00,2015-10-06 08:00,2015-10-20 16:00,2015-11-15 08:00,2015-11-29 16:00,,PT_Normal,,,,,3OrBvzpUf0mVdyrBU5O1cA,8PF8i48HTMGKDpZldq/Mrw,,,N,0,0,,,2014-04-05 12:28,2014-04-05 13:21,admin,admin,
2917,142660,1749,35774,642,0,N,N,N,CP_Drtn,TT_Task,DT_FixedDUR2,TK_NotStart,BL2-ST-7F-1000,Reinforcement for Verticals,4433,192,0,40,0,842.201246,842.201246,40,56313.208727,0,56313.208727,,,,2015-05-05 08:00,2015-05-10 16:00,,2015-04-07 08:00,2015-04-12 16:00,2015-04-07 08:00,2015-04-12 16:00,2015-04-07 08:00,2015-04-12 16:00,2015-05-05 08:00,2015-05-10 16:00,,PT_Normal,,,,,3QJCgghZa0azv2p2q0+mFA,PZ+LnVJ+RqGY61JGGKPQ8A,,,N,0,0,,,2014-04-05 12:28,2014-04-05 13:21,admin,admin,
2918,142661,1749,35774,642,0,N,N,N,CP_Drtn,TT_Task,DT_FixedDUR2,TK_NotStart,BL2-ST-7F-1020,FW for Verticals,4433,192,0,40,0,9250.408023,9250.408023,40,40673.84,0,40673.84,,,,2015-05-11 08:00,2015-05-16 16:00,,2015-04-13 08:00,2015-04-18 16:00,2015-04-13 08:00,2015-04-18 16:00,2015-04-13 08:00,2015-04-18 16:00,2015-05-11 08:00,2015-05-16 16:00,,PT_Normal,,,,,Qv5HWKegpE6tXeX5unVEIw,gaMzcriST4CyfDjrz6d47A,,,N,0,0,,,2014-04-05 12:28,2014-04-05 13:21,admin,admin,
2919,142662,1749,35774,642,0,N,N,N,CP_Drtn,TT_Task,DT_FixedDUR2,TK_NotStart,BL2-ST-7F-1030,Concrete Verticals,4433,192,0,8,0,2003.265215,2003.265215,8,33908.0695,0,33908.0695,,,,2015-05-17 08:00,2015-05-17 16:00,,2015-04-19 08:00,2015-04-19 16:00,2015-04-19 08:00,2015-04-19 16:00,2015-04-19 08:00,2015-04-19 16:00,2015-05-17 08:00,2015-05-17 16:00,,PT_Normal,,,,,+kKfh8n15E6I/w+sQjmPjg,G9QDvZpSR/uKf0YBeTdIsw,,,N,0,0,,,2014-04-05 12:28,2014-04-05 13:21,admin,admin,
2920,142663,1749,35774,642,0,N,N,N,CP_Drtn,TT_Task,DT_FixedDUR2,TK_NotStart,BL2-ST-7F-1040,FW for Slab,4433,192,0,40,0,16202.380057,16202.380057,40,71237.75,0,71237.75,,,,2015-05-18 08:00,2015-05-23 16:00,,2015-04-20 08:00,2015-04-25 16:00,2015-04-20 08:00,2015-04-25 16:00,2015-04-20 08:00,2015-04-25 16:00,2015-05-18 08:00,2015-05-23 16:00,,PT_Normal,,,,,Hyv9/p/GBEC3PBZKq3Oqrw,BnXRgj+JT2W1AdcskgnCNA,,,N,0,0,,,2014-04-05 12:28,2014-04-05 13:21,admin,admin,
2921,142664,1749,35774,642,0,N,N,N,CP_Drtn,TT_Task,DT_FixedDUR2,TK_NotStart,BL2-ST-7F-1050,Reinforcement for Slab,4433,192,0,40,0,1629.170164,1629.170164,40,108928.6736,0,108928.6736,,,,2015-05-24 08:00,2015-05-28 16:00,,2015-04-26 08:00,2015-04-30 16:00,2015-04-26 08:00,2015-04-30 16:00,2015-04-26 08:00,2015-04-30 16:00,2015-05-24 08:00,2015-05-28 16:00,,PT_Normal,,,,,2B0S+Y223kigWAs+BkG+aA,TugSfA7zRoSeYmtk1+t/DA,,,N,0,0,,,2014-04-05 12:28,2014-04-05 13:21,admin,admin,
2922,142665,1749,35774,642,0,N,N,N,CP_Drtn,TT_Task,DT_FixedDUR2,TK_NotStart,BL2-ST-7F-1070,Concrete for Slab,4433,192,0,8,0,4319.680781,4319.680781,8,73115.491,0,73115.491,,,,2015-05-30 08:00,2015-05-30 16:00,,2015-05-02 08:00,2015-05-02 16:00,2015-05-02 08:00,2015-05-02 16:00,2015-05-02 08:00,2015-05-02 16:00,2015-05-30 08:00,2015-05-30 16:00,,PT_Normal,,,,,lJZ06qUT4kWmgE8zrZBxUQ,nL4UvpbvTWqPLGUDRkjxVg,,,N,0,0,,,2014-04-05 12:28,2014-04-05 13:21,admin,admin,
2923,142666,1749,35774,642,0,N,N,N,CP_Drtn,TT_Task,DT_FixedDUR2,TK_NotStart,BL2-ST-7F-1010,MEP Works in Vertical Element,,232,40,40,0,160,160,40,1803.546829,0,1803.546829,,,,2015-05-11 08:00,2015-05-16 16:00,,2015-04-07 08:00,2015-04-12 16:00,2015-04-07 08:00,2015-04-12 16:00,2015-04-07 08:00,2015-04-12 16:00,2015-05-11 08:00,2015-05-16 16:00,,PT_Normal,,,,,k4CGqvwE2E2LYTALDD7w+g,uT7zA1kpQP2qpFgdN+xNxg,,,N,0,0,,,2014-04-05 12:28,2014-04-05 13:21,admin,admin,
2924,142667,1749,35774,642,0,N,N,N,CP_Drtn,TT_Task,DT_FixedDUR2,TK_NotStart,BL2-ST-7F-1060,MEP Works in Slab & Beams,,192,0,40,0,320,320,40,3354.018234,0,3354.018234,,,,2015-05-24 08:00,2015-05-28 16:00,,2015-04-26 08:00,2015-04-30 16:00,2015-04-26 08:00,2015-04-30 16:00,2015-04-26 08:00,2015-04-30 16:00,2015-05-24 08:00,2015-05-28 16:00,,PT_Normal,,,,,nbXeehYezUSIYeqbTRtjRQ,ZNKZ/yRaRV+tiBicPD8f4g,,,N,0,0,,,2014-04-05 12:28,2014-04-05 13:21,admin,admin,
2925,142668,1749,35694,642,0,N,N,N,CP_Drtn,TT_Task,DT_FixedDUR2,TK_NotStart,BL2-FN-7F-1000,Block Works,4433,224,0,168,0,1993,1993,168,26520.298085,0,26520.298085,,,,2015-07-18 08:00,2015-08-07 16:00,,2015-06-20 08:00,2015-07-10 16:00,2015-06-20 08:00,2015-07-10 16:00,2015-06-20 08:00,2015-07-10 16:00,2015-07-18 08:00,2015-08-07 16:00,,PT_Normal,,,,,YWzY0k66Q0K45cZ71QwS9g,St7dpGKiTYiQrItDJ9kNZA,,,N,0,0,,,2014-04-05 12:28,2014-04-05 13:21,admin,admin,
2926,142669,1749,35694,642,0,N,N,N,CP_Drtn,TT_Task,DT_FixedDUR2,TK_NotStart,BL2-FN-7F-1010,Plaster,4433,264,0,152,0,3122,3122,152,36717.891578,0,36717.891578,,,,2015-08-25 08:00,2015-09-12 16:00,,2015-07-23 08:00,2015-08-10 16:00,2015-07-23 08:00,2015-08-10 16:00,2015-07-23 08:00,2015-08-10 16:00,2015-08-25 08:00,2015-09-12 16:00,,PT_Normal,,,,,ybowEXv7jk2dR1U0lkox4Q,ZW0wYKd/REezKpbahqPwdw,,,N,0,0,,,2014-04-05 12:28,2014-04-05 13:21,admin,admin,
2927,142670,1749,35694,642,0,N,N,N,CP_Drtn,TT_Task,DT_FixedDUR2,TK_NotStart,BL2-FN-7F-1020,Paint 1st Coat,4433,264,0,120,0,312.2,312.2,120,5666.888979,0,5666.888979,,,,2015-09-13 08:00,2015-09-27 16:00,,2015-08-11 08:00,2015-08-25 16:00,2015-08-11 08:00,2015-08-25 16:00,2015-08-11 08:00,2015-08-25 16:00,2015-09-13 08:00,2015-09-27 16:00,,PT_Normal,,,,,5fIs4DN+N0eXdVi/RHtSbQ,9yO8kvjUTwKmn9UKPMO8ew,,,N,0,0,,,2014-04-05 12:28,2014-04-05 13:21,admin,admin,
2928,142671,1749,35694,642,0,N,N,N,CP_Drtn,TT_Task,DT_FixedDUR2,TK_NotStart,BL2-FN-7F-1030,Ceiling Paint,4433,264,0,80,0,29.34,29.34,80,187.030801,0,187.030801,,,,2015-09-23 08:00,2015-10-02 16:00,,2015-08-21 08:00,2015-08-30 16:00,2015-08-21 08:00,2015-08-30 16:00,2015-08-21 08:00,2015-08-30 16:00,2015-09-23 08:00,2015-10-02 16:00,,PT_Normal,,,,,5Eg4Y1tj2kyKDpdWqDRXUA,bK2qgtYTSKGPSZYNeapTVA,,,N,0,0,,,2014-04-05 12:28,2014-04-05 13:21,admin,admin,
2929,142672,1749,35694,642,0,N,N,N,CP_Drtn,TT_Task,DT_FixedDUR2,TK_NotStart,BL2-FN-7F-1040,Waterproofing,4433,264,0,40,0,7,7,40,136.282792,0,136.282792,,,,2015-10-03 08:00,2015-10-07 16:00,,2015-08-31 08:00,2015-09-04 16:00,2015-08-31 08:00,2015-09-04 16:00,2015-08-31 08:00,2015-09-04 16:00,2015-10-03 08:00,2015-10-07 16:00,,PT_Normal,,,,,iZPYWvhWaEKnzvkmqkTXwQ,/xlOwOICSB2np3/YBM5jHw,,,N,0,0,,,2014-04-05 12:28,2014-04-05 13:21,admin,admin,
2930,142673,1749,35694,642,0,N,N,N,CP_Drtn,TT_Task,DT_FixedDUR2,TK_NotStart,BL2-FN-7F-1060,Flooring Works,4433,264,0,160,0,1318,1318,160,30748.505221,0,30748.505221,,,,2015-10-08 08:00,2015-10-27 16:00,,2015-09-05 08:00,2015-09-24 16:00,2015-09-05 08:00,2015-09-24 16:00,2015-09-05 08:00,2015-09-24 16:00,2015-10-08 08:00,2015-10-27 16:00,,PT_Normal,,,,,icBt+/w1LUqGmh9wkf8qbw,vqyMa7KLTVSvuBjuM79PHg,,,N,0,0,,,2014-04-05 12:28,2014-04-05 13:21,admin,admin,
2931,142674,1749,35694,642,0,N,N,N,CP_Drtn,TT_Task,DT_FixedDUR2,TK_NotStart,BL2-FN-7F-1100,Final Paint,,592,0,80,0,0,0,80,10,0,10,,,,2016-02-08 08:00,2016-02-17 16:00,,2015-11-26 08:00,2015-12-05 16:00,2015-11-26 08:00,2015-12-05 16:00,2015-11-26 08:00,2015-12-05 16:00,2016-02-08 08:00,2016-02-17 16:00,,PT_Normal,,,,,ggQ0J4w2YUyYJE8ZD8fpFg,oGnvIYOtR/OmIQetiucWOA,,,N,0,0,,,2014-04-05 12:28,2014-04-05 13:21,admin,admin,
2932,142675,1749,35694,642,0,N,N,N,CP_Drtn,TT_Task,DT_FixedDUR2,TK_NotStart,BL2-FN-7F-1050,Wall Tiling,4433,408,144,80,0,1663.8,1663.8,80,7392.455384,0,7392.455384,,,,2015-10-21 08:00,2015-10-30 16:00,,2015-08-31 08:00,2015-09-09 16:00,2015-08-31 08:00,2015-09-09 16:00,2015-08-31 08:00,2015-09-09 16:00,2015-10-21 08:00,2015-10-30 16:00,,PT_Normal,,,,,jIgA4o7Rdk2e7GeDqQtwbQ,qrlqW8J8Q7G1mYW1WhoSPA,,,N,0,0,,,2014-04-05 12:28,2014-04-05 13:21,admin,admin,
2933,142676,1749,35694,642,0,N,N,N,CP_Drtn,TT_Task,DT_FixedDUR2,TK_NotStart,BL2-FN-7F-1070,False Ceiling,4433,264,0,120,0,6335,6335,120,54780,0,54780,,,,2015-10-31 08:00,2015-11-14 16:00,,2015-09-28 08:00,2015-10-12 16:00,2015-09-28 08:00,2015-10-12 16:00,2015-09-28 08:00,2015-10-12 16:00,2015-10-31 08:00,2015-11-14 16:00,,PT_Normal,,,,,aseKm8mDQUKO9urqbSrqtQ,GvhMbqQiTBusaDfAulfAnA,,,N,0,0,,,2014-04-05 12:28,2014-04-05 13:21,admin,admin,
2934,142677,1749,35694,642,0,N,N,N,CP_Drtn,TT_Task,DT_FixedDUR2,TK_NotStart,BL2-FN-7F-1080,Hand Rails for Stairs,4433,264,0,120,0,43,43,120,9498.792932,0,9498.792932,,,,2015-11-15 08:00,2015-11-29 16:00,,2015-10-13 08:00,2015-10-27 16:00,2015-10-13 08:00,2015-10-27 16:00,2015-10-13 08:00,2015-10-27 16:00,2015-11-15 08:00,2015-11-29 16:00,,PT_Normal,,,,,1bqIo6J+xUWqZFJR+5VOjw,0ajoGYIjQeGERwxkAIgH0g,,,N,0,0,,,2014-04-05 12:28,2014-04-05 13:21,admin,admin,
2935,142678,1749,35694,642,0,N,N,N,CP_Drtn,TT_Task,DT_FixedDUR2,TK_NotStart,BL2-FN-7F-1090,Doors Installation,,264,0,120,0,0,0,120,26005.108727,0,26005.108727,,,,2015-11-30 08:00,2015-12-14 16:00,,2015-10-28 08:00,2015-11-11 16:00,2015-10-28 08:00,2015-11-11 16:00,2015-10-28 08:00,2015-11-11 16:00,2015-11-30 08:00,2015-12-14 16:00,,PT_Normal,,,,,81agvYM8ZEagM8hOWaOldg,XDz/5SAmROylCwnmM4MsHA,,,N,0,0,,,2014-04-05 12:28,2014-04-05 13:21,admin,admin,
2936,142679,1749,35817,642,0,N,N,N,CP_Drtn,TT_Task,DT_FixedDUR2,TK_NotStart,BL2-ST-8F-1000,Reinforcement for Verticals,4433,192,0,40,0,842.201246,842.201246,40,56313.208727,0,56313.208727,,,,2015-05-31 08:00,2015-06-04 16:00,,2015-05-03 08:00,2015-05-07 16:00,2015-05-03 08:00,2015-05-07 16:00,2015-05-03 08:00,2015-05-07 16:00,2015-05-31 08:00,2015-06-04 16:00,,PT_Normal,,,,,foDO4j/XGkyV1v99JuB/dw,ChtyZ5kDQ1SC1xMF5dID7Q,,,N,0,0,,,2014-04-05 12:28,2014-04-05 13:21,admin,admin,
2937,142680,1749,35817,642,0,N,N,N,CP_Drtn,TT_Task,DT_FixedDUR2,TK_NotStart,BL2-ST-8F-1020,FW for Verticals,4433,192,0,40,0,9250.408023,9250.408023,40,40673.84,0,40673.84,,,,2015-06-05 08:00,2015-06-09 16:00,,2015-05-09 08:00,2015-05-13 16:00,2015-05-09 08:00,2015-05-13 16:00,2015-05-09 08:00,2015-05-13 16:00,2015-06-05 08:00,2015-06-09 16:00,,PT_Normal,,,,,sDDCSmlEzUOuW5cLLpjZ3w,QVWgwk+0QGyytCYlYGOBMA,,,N,0,0,,,2014-04-05 12:28,2014-04-05 13:21,admin,admin,
2938,142681,1749,35817,642,0,N,N,N,CP_Drtn,TT_Task,DT_FixedDUR2,TK_NotStart,BL2-ST-8F-1030,Concrete Verticals,4433,192,0,8,0,2003.265215,2003.265215,8,33908.0695,0,33908.0695,,,,2015-06-10 08:00,2015-06-10 16:00,,2015-05-14 08:00,2015-05-14 16:00,2015-05-14 08:00,2015-05-14 16:00,2015-05-14 08:00,2015-05-14 16:00,2015-06-10 08:00,2015-06-10 16:00,,PT_Normal,,,,,evQxVql30ki+BIkQUrsnpw,/WvcCXyARaC/XV66v043OQ,,,N,0,0,,,2014-04-05 12:28,2014-04-05 13:21,admin,admin,
2939,142682,1749,35817,642,0,N,N,N,CP_Drtn,TT_Task,DT_FixedDUR2,TK_NotStart,BL2-ST-8F-1040,FW for Slab,4433,192,0,40,0,16202.380057,16202.380057,40,71237.75,0,71237.75,,,,2015-06-11 08:00,2015-06-15 16:00,,2015-05-16 08:00,2015-05-20 16:00,2015-05-16 08:00,2015-05-20 16:00,2015-05-16 08:00,2015-05-20 16:00,2015-06-11 08:00,2015-06-15 16:00,,PT_Normal,,,,,okla4GhqU0WA6e+sGhSAbg,f3vbexvcQLG/S+STjkwH8w,,,N,0,0,,,2014-04-05 12:28,2014-04-05 13:21,admin,admin,
2940,142683,1749,35817,642,0,N,N,N,CP_Drtn,TT_Task,DT_FixedDUR2,TK_NotStart,BL2-ST-8F-1050,Reinforcement for Slab,4433,192,0,40,0,1629.170164,1629.170164,40,108928.6736,0,108928.6736,,,,2015-06-16 08:00,2015-06-20 16:00,,2015-05-21 08:00,2015-05-26 16:00,2015-05-21 08:00,2015-05-26 16:00,2015-05-21 08:00,2015-05-26 16:00,2015-06-16 08:00,2015-06-20 16:00,,PT_Normal,,,,,Dx50cHoibUulRir185sjQA,3NfuS8CIRbCnZ3uc0kGWEg,,,N,0,0,,,2014-04-05 12:28,2014-04-05 13:21,admin,admin,
2941,142684,1749,35817,642,0,N,N,N,CP_Drtn,TT_Task,DT_FixedDUR2,TK_NotStart,BL2-ST-8F-1070,Concrete for Slab,4433,192,0,8,0,4319.680781,4319.680781,8,73115.491,0,73115.491,,,,2015-06-21 08:00,2015-06-21 16:00,,2015-05-27 08:00,2015-05-27 16:00,2015-05-27 08:00,2015-05-27 16:00,2015-05-27 08:00,2015-05-27 16:00,2015-06-21 08:00,2015-06-21 16:00,,PT_Normal,,,,,qHBgXke3IkmlbwX67SQZUA,Fr9MPjGRQ/6RtPpB9rdO4Q,,,N,0,0,,,2014-04-05 12:28,2014-04-05 13:21,admin,admin,
2942,142685,1749,35817,642,0,N,N,N,CP_Drtn,TT_Task,DT_FixedDUR2,TK_NotStart,BL2-ST-8F-1010,MEP Works in Vertical Element,,232,40,40,0,160,160,40,1803.546829,0,1803.546829,,,,2015-06-05 08:00,2015-06-09 16:00,,2015-05-03 08:00,2015-05-07 16:00,2015-05-03 08:00,2015-05-07 16:00,2015-05-03 08:00,2015-05-07 16:00,2015-06-05 08:00,2015-06-09 16:00,,PT_Normal,,,,,KmE17R7mn02jbaOvK0Gj2w,pAzF6/MPT1eqkuaFCpFo9g,,,N,0,0,,,2014-04-05 12:28,2014-04-05 13:21,admin,admin,
2943,142686,1749,35817,642,0,N,N,N,CP_Drtn,TT_Task,DT_FixedDUR2,TK_NotStart,BL2-ST-8F-1060,MEP Works in Slab & Beams,,192,0,40,0,320,320,40,3354.018234,0,3354.018234,,,,2015-06-16 08:00,2015-06-20 16:00,,2015-05-21 08:00,2015-05-26 16:00,2015-05-21 08:00,2015-05-26 16:00,2015-05-21 08:00,2015-05-26 16:00,2015-06-16 08:00,2015-06-20 16:00,,PT_Normal,,,,,QCz08Xb7vUyRyMsxXhKyIA,DKY2xci8QnixUv2ndpCk4w,,,N,0,0,,,2014-04-05 12:28,2014-04-05 13:21,admin,admin,
2944,142687,1749,35757,642,0,N,N,N,CP_Drtn,TT_Task,DT_FixedDUR2,TK_NotStart,BL2-FN-8F-1000,Block Works,4433,208,0,168,0,1993,1993,168,26519.959378,0,26519.959378,,,,2015-07-30 08:00,2015-08-19 16:00,,2015-07-04 08:00,2015-07-24 16:00,2015-07-04 08:00,2015-07-24 16:00,2015-07-04 08:00,2015-07-24 16:00,2015-07-30 08:00,2015-08-19 16:00,,PT_Normal,,,,,XbDtm29iN0quD23VjahAsw,DJzDq/F9QBqLUP2nVNZKgA,,,N,0,0,,,2014-04-05 12:28,2014-04-05 13:21,admin,admin,
2945,142688,1749,35757,642,0,N,N,N,CP_Drtn,TT_Task,DT_FixedDUR2,TK_NotStart,BL2-FN-8F-1010,Plaster,4433,272,0,152,0,3122,3122,152,36717.891578,0,36717.891578,,,,2015-09-09 08:00,2015-09-27 16:00,,2015-08-06 08:00,2015-08-24 16:00,2015-08-06 08:00,2015-08-24 16:00,2015-08-06 08:00,2015-08-24 16:00,2015-09-09 08:00,2015-09-27 16:00,,PT_Normal,,,,,4mwyVOA1eEmWhzAOGDfSUQ,99rxPR78Qu+yil6KICG4Kg,,,N,0,0,,,2014-04-05 12:28,2014-04-05 13:21,admin,admin,
2946,142689,1749,35757,642,0,N,N,N,CP_Drtn,TT_Task,DT_FixedDUR2,TK_NotStart,BL2-FN-8F-1020,Paint 1st Coat,4433,272,0,120,0,312.2,312.2,120,5666.888979,0,5666.888979,,,,2015-09-28 08:00,2015-10-12 16:00,,2015-08-25 08:00,2015-09-08 16:00,2015-08-25 08:00,2015-09-08 16:00,2015-08-25 08:00,2015-09-08 16:00,2015-09-28 08:00,2015-10-12 16:00,,PT_Normal,,,,,zctuvMCxQkqip1igl83EJQ,KouRbL0ATf+UxgOXkYlodA,,,N,0,0,,,2014-04-05 12:28,2014-04-05 13:21,admin,admin,
2947,142690,1749,35757,642,0,N,N,N,CP_Drtn,TT_Task,DT_FixedDUR2,TK_NotStart,BL2-FN-8F-1030,Ceiling Paint,4433,272,0,80,0,78,78,80,480,0,480,,,,2015-10-08 08:00,2015-10-17 16:00,,2015-09-04 08:00,2015-09-13 16:00,2015-09-04 08:00,2015-09-13 16:00,2015-09-04 08:00,2015-09-13 16:00,2015-10-08 08:00,2015-10-17 16:00,,PT_Normal,,,,,STwH6ycnn0irUumNRMZJqw,ap+x9U02TnK+uDeNYk+2ZA,,,N,0,0,,,2014-04-05 12:28,2014-04-05 13:21,admin,admin,
2948,142691,1749,35757,642,0,N,N,N,CP_Drtn,TT_Task,DT_FixedDUR2,TK_NotStart,BL2-FN-8F-1040,Waterproofing,4433,272,0,40,0,56,56,40,429,0,429,,,,2015-10-18 08:00,2015-10-22 16:00,,2015-09-14 08:00,2015-09-18 16:00,2015-09-14 08:00,2015-09-18 16:00,2015-09-14 08:00,2015-09-18 16:00,2015-10-18 08:00,2015-10-22 16:00,,PT_Normal,,,,,x+ZOoJ96mEWWUDWiyZLgWA,WB6SM75uQByiiEYWEahRIQ,,,N,0,0,,,2014-04-05 12:28,2014-04-05 13:21,admin,admin,
2949,142692,1749,35757,642,0,N,N,N,CP_Drtn,TT_Task,DT_FixedDUR2,TK_NotStart,BL2-FN-8F-1060,Flooring Works,4433,272,0,160,0,1318,1318,160,30748.505221,0,30748.505221,,,,2015-10-23 08:00,2015-11-11 16:00,,2015-09-19 08:00,2015-10-08 16:00,2015-09-19 08:00,2015-10-08 16:00,2015-09-19 08:00,2015-10-08 16:00,2015-10-23 08:00,2015-11-11 16:00,,PT_Normal,,,,,kmPca/PN8kmhBQkmuudUdQ,2iIiF0CrSCu+eMb/zAhmTg,,,N,0,0,,,2014-04-05 12:28,2014-04-05 13:21,admin,admin,
2950,142693,1749,35757,642,0,N,N,N,CP_Drtn,TT_Task,DT_FixedDUR2,TK_NotStart,BL2-FN-8F-1100,Final Paint,,488,0,80,0,0,0,80,10,0,10,,,,2016-02-10 08:00,2016-02-19 16:00,,2015-12-11 08:00,2015-12-20 16:00,2015-12-11 08:00,2015-12-20 16:00,2015-12-11 08:00,2015-12-20 16:00,2016-02-10 08:00,2016-02-19 16:00,,PT_Normal,,,,,HBkl3gKn2Eyv01YrqdHIfA,7cfFOTGWR8iz8JAO3KrWMA,,,N,0,0,,,2014-04-05 12:28,2014-04-05 13:21,admin,admin,
2951,142694,1749,35757,642,0,N,N,N,CP_Drtn,TT_Task,DT_FixedDUR2,TK_NotStart,BL2-FN-8F-1050,Wall Tiling,4433,416,144,80,0,1663.8,1663.8,80,7392.455384,0,7392.455384,,,,2015-11-05 08:00,2015-11-14 16:00,,2015-09-14 08:00,2015-09-23 16:00,2015-09-14 08:00,2015-09-23 16:00,2015-09-14 08:00,2015-09-23 16:00,2015-11-05 08:00,2015-11-14 16:00,,PT_Normal,,,,,w2xvk+rbP0ifCaCeLyR0lA,IqiLv2lnRECCke+z+SOT+Q,,,N,0,0,,,2014-04-05 12:28,2014-04-05 13:21,admin,admin,
2952,142695,1749,35757,642,0,N,N,N,CP_Drtn,TT_Task,DT_FixedDUR2,TK_NotStart,BL2-FN-8F-1070,False Ceiling,4433,272,0,120,0,6670,6670,120,54780,0,54780,,,,2015-11-15 08:00,2015-11-29 16:00,,2015-10-12 08:00,2015-10-26 16:00,2015-10-12 08:00,2015-10-26 16:00,2015-10-12 08:00,2015-10-26 16:00,2015-11-15 08:00,2015-11-29 16:00,,PT_Normal,,,,,/gexh9iCMU6t94J/3KWs6A,so3yX8FQRLmVA9RC37xnOg,,,N,0,0,,,2014-04-05 12:28,2014-04-05 13:21,admin,admin,
2953,142696,1749,35757,642,0,N,N,N,CP_Drtn,TT_Task,DT_FixedDUR2,TK_NotStart,BL2-FN-8F-1080,Hand Rails for Stairs,4433,272,8,120,0,43,43,120,9498.792932,0,9498.792932,,,,2015-11-30 08:00,2015-12-14 16:00,,2015-10-27 08:00,2015-11-10 16:00,2015-10-27 08:00,2015-11-10 16:00,2015-10-27 08:00,2015-11-10 16:00,2015-11-30 08:00,2015-12-14 16:00,,PT_Normal,,,,,LCnu6lMphkOQoLEhSHI02Q,7Dowhi+IQdGjucvzhBKvXw,,,N,0,0,,,2014-04-05 12:28,2014-04-05 13:21,admin,admin,
2954,142697,1749,35757,642,0,N,N,N,CP_Drtn,TT_Task,DT_FixedDUR2,TK_NotStart,BL2-FN-8F-1090,Doors Installation,,264,0,120,0,0,0,120,26005.108727,0,26005.108727,,,,2015-12-15 08:00,2015-12-29 16:00,,2015-11-12 08:00,2015-11-26 16:00,2015-11-12 08:00,2015-11-26 16:00,2015-11-12 08:00,2015-11-26 16:00,2015-12-15 08:00,2015-12-29 16:00,,PT_Normal,,,,,bvkA3V2BX0mr959AunFWDg,336cDZ4hRVO7GZSlhD9MXQ,,,N,0,0,,,2014-04-05 12:28,2014-04-05 13:21,admin,admin,
2955,142698,1749,35818,642,0,N,N,N,CP_Drtn,TT_Task,DT_FixedDUR2,TK_NotStart,BL2-ST-9F-1000,Reinforcement for Verticals,4433,192,0,40,0,842.201246,842.201246,40,56313.208727,0,56313.208727,,,,2015-06-22 08:00,2015-06-26 16:00,,2015-05-28 08:00,2015-06-02 16:00,2015-05-28 08:00,2015-06-02 16:00,2015-05-28 08:00,2015-06-02 16:00,2015-06-22 08:00,2015-06-26 16:00,,PT_Normal,,,,,RWjaZM2z4E21E/ZDNs9hug,njgDH2SHSc66xoR63IqL5Q,,,N,0,0,,,2014-04-05 12:28,2014-04-05 13:21,admin,admin,
2956,142699,1749,35818,642,0,N,N,N,CP_Drtn,TT_Task,DT_FixedDUR2,TK_NotStart,BL2-ST-9F-1020,FW for Verticals,4433,192,0,40,0,12043.826843,12043.826843,40,52954.5,0,52954.5,,,,2015-06-27 08:00,2015-07-01 16:00,,2015-06-03 08:00,2015-06-07 16:00,2015-06-03 08:00,2015-06-07 16:00,2015-06-03 08:00,2015-06-07 16:00,2015-06-27 08:00,2015-07-01 16:00,,PT_Normal,,,,,82qYUWStWkGpkfTwYMKUAA,+lAhCIY6Teey30XXawyEaA,,,N,0,0,,,2014-04-05 12:28,2014-04-05 13:21,admin,admin,
2957,142700,1749,35818,642,0,N,N,N,CP_Drtn,TT_Task,DT_FixedDUR2,TK_NotStart,BL2-ST-9F-1030,Concrete Verticals,4433,192,0,8,0,2003.265215,2003.265215,8,33908.0695,0,33908.0695,,,,2015-07-02 08:00,2015-07-02 16:00,,2015-06-08 08:00,2015-06-08 16:00,2015-06-08 08:00,2015-06-08 16:00,2015-06-08 08:00,2015-06-08 16:00,2015-07-02 08:00,2015-07-02 16:00,,PT_Normal,,,,,GjjR7X93j0uTq9ZS5QSO8A,kkM3Hwp6SI2tBQ8mO3Ap+Q,,,N,0,0,,,2014-04-05 12:28,2014-04-05 13:21,admin,admin,
2958,142701,1749,35818,642,0,N,N,N,CP_Drtn,TT_Task,DT_FixedDUR2,TK_NotStart,BL2-ST-9F-1040,FW for Slab,4433,192,0,40,0,16202.380057,16202.380057,40,71237.75,0,71237.75,,,,2015-07-03 08:00,2015-07-07 16:00,,2015-06-09 08:00,2015-06-13 16:00,2015-06-09 08:00,2015-06-13 16:00,2015-06-09 08:00,2015-06-13 16:00,2015-07-03 08:00,2015-07-07 16:00,,PT_Normal,,,,,cqV3r2OLzEC2OAD07x+nwA,6aQyrId8SxmqeOl7sqc1AQ,,,N,0,0,,,2014-04-05 12:28,2014-04-05 13:21,admin,admin,
2959,142702,1749,35818,642,0,N,N,N,CP_Drtn,TT_Task,DT_FixedDUR2,TK_NotStart,BL2-ST-9F-1050,Reinforcement for Slab,4433,192,0,40,0,1629.170164,1629.170164,40,108928.6736,0,108928.6736,,,,2015-07-08 08:00,2015-07-12 16:00,,2015-06-14 08:00,2015-06-18 16:00,2015-06-14 08:00,2015-06-18 16:00,2015-06-14 08:00,2015-06-18 16:00,2015-07-08 08:00,2015-07-12 16:00,,PT_Normal,,,,,U6IgJRbNS02Zgc3gUU3JTg,xxDC1lRzTf6/KPXRCq1Vcw,,,N,0,0,,,2014-04-05 12:28,2014-04-05 13:21,admin,admin,
2960,142703,1749,35818,642,0,N,N,N,CP_Drtn,TT_Task,DT_FixedDUR2,TK_NotStart,BL2-ST-9F-1070,Concrete for Slab,4433,192,0,8,0,4319.680781,4319.680781,8,73115.491,0,73115.491,,,,2015-07-13 08:00,2015-07-13 16:00,,2015-06-19 08:00,2015-06-19 16:00,2015-06-19 08:00,2015-06-19 16:00,2015-06-19 08:00,2015-06-19 16:00,2015-07-13 08:00,2015-07-13 16:00,,PT_Normal,,,,,vQPmIpUG5ESSDecL3kRSRQ,LiaUNXUgT+KOuBLX+FxjIg,,,N,0,0,,,2014-04-05 12:28,2014-04-05 13:21,admin,admin,
2961,142704,1749,35818,642,0,N,N,N,CP_Drtn,TT_Task,DT_FixedDUR2,TK_NotStart,BL2-ST-9F-1010,MEP Works in Vertical Element,,232,40,40,0,160,160,40,1803.546829,0,1803.546829,,,,2015-06-27 08:00,2015-07-01 16:00,,2015-05-28 08:00,2015-06-02 16:00,2015-05-28 08:00,2015-06-02 16:00,2015-05-28 08:00,2015-06-02 16:00,2015-06-27 08:00,2015-07-01 16:00,,PT_Normal,,,,,5G21ZiDO00eP/B+EMRttpA,kf905a6rSI2XKfy1SSVypQ,,,N,0,0,,,2014-04-05 12:28,2014-04-05 13:21,admin,admin,
2962,142705,1749,35818,642,0,N,N,N,CP_Drtn,TT_Task,DT_FixedDUR2,TK_NotStart,BL2-ST-9F-1060,MEP Works in Slab & Beams,,192,0,40,0,320,320,40,3354.018234,0,3354.018234,,,,2015-07-08 08:00,2015-07-12 16:00,,2015-06-14 08:00,2015-06-18 16:00,2015-06-14 08:00,2015-06-18 16:00,2015-06-14 08:00,2015-06-18 16:00,2015-07-08 08:00,2015-07-12 16:00,,PT_Normal,,,,,IWyKQgIP5Uu54Q6a1zVuhQ,9Ow1TR5lQNqDcL3bspQDCQ,,,N,0,0,,,2014-04-05 12:28,2014-04-05 13:21,admin,admin,
2963,142706,1749,35818,644,0,N,N,N,CP_Drtn,TT_Task,DT_FixedDUR2,TK_NotStart,BL2-ST-9F-1080,Reinforcement for Staircase Verticals,,168,0,40,0,0,0,40,5,0,5,,,,2015-07-14 08:00,2015-07-19 16:00,,2015-06-20 08:00,2015-06-24 16:00,2015-06-20 08:00,2015-06-24 16:00,2015-06-20 08:00,2015-06-24 16:00,2015-07-14 08:00,2015-07-19 16:00,,PT_Normal,,,,,RWBqKkUDVEO0Isz1QzysoA,FK70fO9Yfku/lc47+776Xw,,,N,0,0,,,2014-04-05 12:28,2014-04-05 13:21,admin,admin,
2964,142707,1749,35818,644,0,N,N,N,CP_Drtn,TT_Task,DT_FixedDUR2,TK_NotStart,BL2-ST-9F-1110,FW for Staircase Verticals,,168,0,32,0,0,0,32,4,0,4,,,,2015-07-20 08:00,2015-07-23 16:00,,2015-06-25 08:00,2015-06-29 16:00,2015-06-25 08:00,2015-06-29 16:00,2015-06-25 08:00,2015-06-29 16:00,2015-07-20 08:00,2015-07-23 16:00,,PT_Normal,,,,,nY4wCpKcdk6py0fV11h8eQ,Ju4LkISFfUeEeZG9KM1ABA,,,N,0,0,,,2014-04-05 12:28,2014-04-05 13:21,admin,admin,
2965,142708,1749,35818,644,0,N,N,N,CP_Drtn,TT_Task,DT_FixedDUR2,TK_NotStart,BL2-ST-9F-1130,Concrete for Staircase Verticals,,168,0,8,0,0,0,8,1,0,1,,,,2015-07-25 08:00,2015-07-25 16:00,,2015-06-30 08:00,2015-06-30 16:00,2015-06-30 08:00,2015-06-30 16:00,2015-06-30 08:00,2015-06-30 16:00,2015-07-25 08:00,2015-07-25 16:00,,PT_Normal,,,,,A7yz2oq4+EK6p1paMN5/TQ,mS+CjQvcrk+oragpfu+QsA,,,N,0,0,,,2014-04-05 12:28,2014-04-05 13:21,admin,admin,
2966,142709,1749,35818,644,0,N,N,N,CP_Drtn,TT_Task,DT_FixedDUR2,TK_NotStart,BL2-ST-9F-1140,FW for Staircase Slab,,168,0,24,0,0,0,24,3,0,3,,,,2015-07-26 08:00,2015-07-28 16:00,,2015-07-01 08:00,2015-07-04 16:00,2015-07-01 08:00,2015-07-04 16:00,2015-07-01 08:00,2015-07-04 16:00,2015-07-26 08:00,2015-07-28 16:00,,PT_Normal,,,,,H6QDpw1WJkO2v0gX4Dj9UQ,gGHSdoOFDUKM9VQ2DhK9jQ,,,N,0,0,,,2014-04-05 12:28,2014-04-05 13:21,admin,admin,
2967,142710,1749,35818,644,0,N,N,N,CP_Drtn,TT_Task,DT_FixedDUR2,TK_NotStart,BL2-ST-9F-1150,Reinforcement for Staircase Slab,,168,0,24,0,0,0,24,3,0,3,,,,2015-07-29 08:00,2015-08-01 16:00,,2015-07-05 08:00,2015-07-07 16:00,2015-07-05 08:00,2015-07-07 16:00,2015-07-05 08:00,2015-07-07 16:00,2015-07-29 08:00,2015-08-01 16:00,,PT_Normal,,,,,mItUf1dP0kCkWcaYG/QJhg,Wf25jSBh40mK6Sv9brWDvg,,,N,0,0,,,2014-04-05 12:28,2014-04-05 13:21,admin,admin,
2968,142711,1749,35818,644,0,N,N,N,CP_Drtn,TT_Task,DT_FixedDUR2,TK_NotStart,BL2-ST-9F-1160,Concrete for Staircase Slab,,168,0,8,0,0,0,8,1,0,1,,,,2015-08-02 08:00,2015-08-02 16:00,,2015-07-08 08:00,2015-07-08 16:00,2015-07-08 08:00,2015-07-08 16:00,2015-07-08 08:00,2015-07-08 16:00,2015-08-02 08:00,2015-08-02 16:00,,PT_Normal,,,,,H/2B5lFgKEGY9eMeoAH3EQ,TkFBw/YR70qRtxjzlng/7A,,,N,0,0,,,2014-04-05 12:28,2014-04-05 13:21,admin,admin,
2969,142712,1749,35818,644,0,N,N,N,CP_Drtn,TT_Task,DT_FixedDUR2,TK_NotStart,BL2-ST-9F-1100,Reinforcement for Parapet,,472,16,24,0,0,0,24,3,0,3,,,,2015-08-31 08:00,2015-09-02 16:00,,2015-06-23 08:00,2015-06-25 16:00,2015-06-23 08:00,2015-06-25 16:00,2015-06-23 08:00,2015-06-25 16:00,2015-08-31 08:00,2015-09-02 16:00,,PT_Normal,,,,,n+C/qLAHiEiLEek2mBw+bQ,6zQaWCa16U+KZJZsJjflmg,,,N,0,0,,,2014-04-05 12:28,2014-04-05 13:21,admin,admin,
2970,142713,1749,35818,644,0,N,N,N,CP_Drtn,TT_Task,DT_FixedDUR2,TK_NotStart,BL2-ST-9F-1090,FW for Parapet,,456,0,64,0,0,0,64,8,0,8,,,,2015-08-25 08:00,2015-09-02 16:00,,2015-06-20 08:00,2015-06-28 16:00,2015-06-20 08:00,2015-06-28 16:00,2015-06-20 08:00,2015-06-28 16:00,2015-08-25 08:00,2015-09-02 16:00,,PT_Normal,,,,,+foWv8v3ukCMdlZBSLjLYw,o0sqalnteE6/41SCdYMTbg,,,N,0,0,,,2014-04-05 12:28,2014-04-05 13:21,admin,admin,
2971,142714,1749,35818,644,0,N,N,N,CP_Drtn,TT_Task,DT_FixedDUR2,TK_NotStart,BL2-ST-9F-1120,Concrete for Parapet,,456,280,8,0,0,0,8,1,0,1,,,,2015-09-03 08:00,2015-09-03 16:00,,2015-06-29 08:00,2015-06-29 16:00,2015-06-29 08:00,2015-06-29 16:00,2015-06-29 08:00,2015-06-29 16:00,2015-09-03 08:00,2015-09-03 16:00,,PT_Normal,,,,,HW9QrmqvRkWWeedbH6QX6Q,msazfy+QwkC4dJrC1gWfeg,,,N,0,0,,,2014-04-05 12:28,2014-04-05 13:21,admin,admin,
2972,142715,1749,35719,642,0,N,N,N,CP_Drtn,TT_Task,DT_FixedDUR2,TK_NotStart,BL2-FN-9F-1000,Block Works,4433,200,0,120,0,2864,2864,120,38087.912532,0,38087.912532,,,,2015-08-17 08:00,2015-08-31 16:00,,2015-07-23 08:00,2015-08-06 16:00,2015-07-23 08:00,2015-08-06 16:00,2015-07-23 08:00,2015-08-06 16:00,2015-08-17 08:00,2015-08-31 16:00,,PT_Normal,,,,,sNj75aq6O0yVB2ANrYXKEg,+m3/yB82TLKPwpV+RI0nSw,,,N,0,0,,,2014-04-05 12:28,2014-04-05 13:21,admin,admin,
2973,142716,1749,35719,642,0,N,N,N,CP_Drtn,TT_Task,DT_FixedDUR2,TK_NotStart,BL2-FN-9F-1010,Plaster,4433,200,0,120,0,4486,4486,120,52743.759682,0,52743.759682,,,,2015-09-04 08:00,2015-09-18 16:00,,2015-08-10 08:00,2015-08-24 16:00,2015-08-10 08:00,2015-08-24 16:00,2015-08-10 08:00,2015-08-24 16:00,2015-09-04 08:00,2015-09-18 16:00,,PT_Normal,,,,,VCjjcdWL5k+8hxPX8kPEDA,eGALHGjxS7uBIa1ZvtGG9A,,,N,0,0,,,2014-04-05 12:28,2014-04-05 13:21,admin,admin,
2974,142717,1749,35719,642,0,N,N,N,CP_Drtn,TT_Task,DT_FixedDUR2,TK_NotStart,BL2-FN-9F-1020,Paint 1st Coat,4433,200,0,120,0,722,722,120,8136.062208,0,8136.062208,,,,2015-09-14 08:00,2015-09-28 16:00,,2015-08-20 08:00,2015-09-03 16:00,2015-08-20 08:00,2015-09-03 16:00,2015-08-20 08:00,2015-09-03 16:00,2015-09-14 08:00,2015-09-28 16:00,,PT_Normal,,,,,9MYM90H1eUuAqbN3KD1yww,kgjKP5/WSyy3mY9pDwnoLg,,,N,0,0,,,2014-04-05 12:28,2014-04-05 13:21,admin,admin,
2975,142718,1749,35719,642,0,N,N,N,CP_Drtn,TT_Task,DT_FixedDUR2,TK_NotStart,BL2-FN-9F-1060,Flooring Works,4433,200,0,160,0,1478,1478,160,34472.02297,0,34472.02297,,,,2015-09-29 08:00,2015-10-18 16:00,,2015-09-04 08:00,2015-09-23 16:00,2015-09-04 08:00,2015-09-23 16:00,2015-09-04 08:00,2015-09-23 16:00,2015-09-29 08:00,2015-10-18 16:00,,PT_Normal,,,,,XjtijwCGe0KnrBgxh9/6gw,TLfLJDmdRKKs2/z/5ckJmw,,,N,0,0,,,2014-04-05 12:28,2014-04-05 13:21,admin,admin,
2976,142719,1749,35719,642,0,N,N,N,CP_Drtn,TT_Task,DT_FixedDUR2,TK_NotStart,BL2-FN-9F-1090,Final Paint,,680,0,80,0,0,0,80,10,0,10,,,,2016-02-10 08:00,2016-02-19 16:00,,2015-11-17 08:00,2015-11-26 16:00,2015-11-17 08:00,2015-11-26 16:00,2015-11-17 08:00,2015-11-26 16:00,2016-02-10 08:00,2016-02-19 16:00,,PT_Normal,,,,,xy8nNWlZ+U2DasNnGcIWFQ,fIIVio+8T7ulDJqaXd3mUg,,,N,0,0,,,2014-04-05 12:28,2014-04-05 13:21,admin,admin,
2977,142720,1749,35719,642,0,N,N,N,CP_Drtn,TT_Task,DT_FixedDUR2,TK_NotStart,BL2-FN-9F-1080,Hand Rails for Stairs,4433,1280,392,120,0,64.5,64.5,120,14240.689398,0,14240.689398,,,,2016-03-02 08:00,2016-03-16 16:00,,2015-09-24 08:00,2015-10-08 16:00,2015-09-24 08:00,2015-10-08 16:00,2015-09-24 08:00,2015-10-08 16:00,2016-03-02 08:00,2016-03-16 16:00,,PT_Normal,,,,,n0QZ7zKxFUOnxt6wvIrA2Q,+Aee6b70QNOYVjNWwu5j2g,,,N,0,0,,,2014-04-05 12:28,2014-04-05 13:21,admin,admin,
2978,142721,1749,35719,642,0,N,N,N,CP_Drtn,TT_Task,DT_FixedDUR2,TK_NotStart,BL2-FN-9F-1100,Doors Installation,,888,888,120,0,0,0,120,26005.108727,0,26005.108727,,,,2016-03-17 08:00,2016-03-31 16:00,,2015-11-27 08:00,2015-12-11 16:00,2015-11-27 08:00,2015-12-11 16:00,2015-11-27 08:00,2015-12-11 16:00,2016-03-17 08:00,2016-03-31 16:00,,PT_Normal,,,,,yKXjWAHLHE2Q7rBKV/aSuA,Z8sbB3keR9qHmm/M3GFMrQ,,,N,0,0,,,2014-04-05 12:28,2014-04-05 13:21,admin,admin,
2979,142722,1749,35825,642,0,N,N,N,CP_Drtn,TT_Task,DT_FixedDUR2,TK_NotStart,BL3-ST-B2-1020,Formwork,4433,0,0,80,0,5457.457414,5457.457414,80,24003.37,0,24003.37,,,,2014-06-21 08:00,2014-07-02 14:00,,2014-06-21 08:00,2014-07-02 14:00,2014-06-21 08:00,2014-07-02 14:00,2014-06-21 08:00,2014-07-02 14:00,2014-06-21 08:00,2014-07-02 14:00,,PT_Normal,,,,,/T57dqH8bkyNoqx5RjLCTw,4YpC0vcQSyOl7yVMVxNJtQ,,,Y,0,0,,,2014-04-05 12:28,2014-04-05 13:21,admin,admin,
2980,142723,1749,35825,642,0,N,N,N,CP_Drtn,TT_Task,DT_FixedDUR2,TK_NotStart,BL3-ST-B2-1010,Waterproofing,4433,0,0,96,0,937.277309,937.277309,96,92,0,92,,,,2014-06-05 08:00,2014-06-18 16:00,,2014-06-05 08:00,2014-06-18 16:00,2014-06-05 08:00,2014-06-18 16:00,2014-06-05 08:00,2014-06-18 16:00,2014-06-05 08:00,2014-06-18 16:00,,PT_Normal,,,,,aXkB5wcmRkK1wn6rBj1sdg,C7CinrfIR/y1fUFVcnLOSQ,,,Y,0,0,,,2014-04-05 12:28,2014-04-05 13:21,admin,admin,
2981,142724,1749,35825,642,0,N,N,N,CP_Drtn,TT_Task,DT_FixedDUR2,TK_NotStart,BL3-ST-B2-1030,Reinforcement,4433,0,0,144,0,3429.955513,3429.955513,144,229339.26,0,229339.26,,,,2014-07-03 10:00,2014-08-05 16:00,,2014-07-03 10:00,2014-08-05 16:00,2014-07-03 10:00,2014-08-05 16:00,2014-07-03 10:00,2014-08-05 16:00,2014-07-03 10:00,2014-08-05 16:00,,PT_Normal,,,,,uOfVgy32PU+BwmK62lqSbA,9IKWw0atRSuQYOgi2/JJSw,,,Y,0,0,,,2014-04-05 12:28,2014-04-05 13:21,admin,admin,
2982,142725,1749,35825,642,0,N,N,N,CP_Drtn,TT_Task,DT_FixedDUR2,TK_NotStart,BL3-ST-B2-1060,Concrete,4433,0,0,8,0,21500.544427,21500.544427,8,363917.095,0,363917.095,,,,2014-08-06 08:00,2014-08-06 16:00,,2014-08-06 08:00,2014-08-06 16:00,2014-08-06 08:00,2014-08-06 16:00,2014-08-06 08:00,2014-08-06 16:00,2014-08-06 08:00,2014-08-06 16:00,,PT_Normal,,,,,QUaK+cdgSUmUhxHxLUsP/w,ASYDLt/gT1KDZWW/gRwaqA,,,Y,0,0,,,2014-04-05 12:28,2014-04-05 13:21,admin,admin,
2983,142726,1749,35825,642,0,N,N,N,CP_Drtn,TT_Task,DT_FixedDUR2,TK_NotStart,BL3-ST-B2-1000,Blinding,,0,0,40,0,0,0,40,5,0,5,,,,2014-05-31 08:00,2014-06-04 16:00,,2014-05-31 08:00,2014-06-04 16:00,2014-05-31 08:00,2014-06-04 16:00,2014-05-31 08:00,2014-06-04 16:00,2014-05-31 08:00,2014-06-04 16:00,,PT_Normal,,,,,yuW/4YcxokS82FobTLKD5w,FTl1B9imSZeL+8hRCwknTw,,,Y,0,0,,,2014-04-05 12:28,2014-04-05 13:21,admin,admin,
2984,142727,1749,35825,642,0,N,N,N,CP_Drtn,TT_Task,DT_FixedDUR2,TK_NotStart,BL3-ST-B2-1040,MEP Works in Raft,4456,0,0,40,0,312,312,40,13056.000019,0,13056.000019,,,,2014-07-31 08:00,2014-08-05 16:00,,2014-07-31 08:00,2014-08-05 16:00,2014-07-31 08:00,2014-08-05 16:00,2014-07-31 08:00,2014-08-05 16:00,2014-07-31 08:00,2014-08-05 16:00,,PT_Normal,,,,,rC+/LHSBKUehM0V5Ompwtg,qBb+8Q+DS6mGZEuZVWAZgw,,,Y,0,0,,,2014-04-05 12:28,2014-04-05 13:21,admin,admin,
2985,142728,1749,35825,642,0,N,N,N,CP_Drtn,TT_Task,DT_FixedDUR2,TK_NotStart,BL3-ST-B2-1050,Earthing Works,4480,0,0,40,0,408,408,40,8367.291801,0,8367.291801,,,,2014-07-31 08:00,2014-08-05 16:00,,2014-07-31 08:00,2014-08-05 16:00,2014-07-31 08:00,2014-08-05 16:00,2014-07-31 08:00,2014-08-05 16:00,2014-07-31 08:00,2014-08-05 16:00,,PT_Normal,,,,,2bYykB8t5EabzgoyDX/eOQ,SMfLrtvCTd6MNdsFw7G3bQ,,,Y,0,0,,,2014-04-05 12:28,2014-04-05 13:21,admin,admin,
2986,142729,1749,35853,642,0,N,N,N,CP_Drtn,TT_Task,DT_FixedDUR2,TK_NotStart,BL3-FN-B2-1000,Block Works,4433,328,0,192,0,574.5,574.5,192,7661.840379,0,7661.840379,,,,2015-01-11 08:00,2015-02-07 16:00,,2014-11-22 08:00,2014-12-18 16:00,2014-11-22 08:00,2014-12-18 16:00,2014-11-22 08:00,2014-12-18 16:00,2015-01-11 08:00,2015-02-07 16:00,,PT_Normal,,,,,GAu18VcyokK4ZMhBJ1YLuQ,kKVFMfRkT2GaAQlP02yQJQ,,,N,0,0,,,2014-04-05 12:28,2014-04-05 13:21,admin,admin,
2987,142730,1749,35853,642,0,N,N,N,CP_Drtn,TT_Task,DT_FixedDUR2,TK_NotStart,BL3-FN-B2-1010,Plaster,4433,336,0,160,0,738.9,738.9,160,8704.331769,0,8704.331769,,,,2015-02-09 08:00,2015-03-03 16:00,,2014-12-20 08:00,2015-01-13 16:00,2014-12-20 08:00,2015-01-13 16:00,2014-12-20 08:00,2015-01-13 16:00,2015-02-09 08:00,2015-03-03 16:00,,PT_Normal,,,,,fyQuYopr9kq2CiAM28G0Vg,/6PBm1TqRNS6P/XqF/RwqQ,,,N,0,0,,,2014-04-05 12:28,2014-04-05 13:21,admin,admin,
2988,142731,1749,35853,642,0,N,N,N,CP_Drtn,TT_Task,DT_FixedDUR2,TK_NotStart,BL3-FN-B2-1020,Paint 1st Coat,4433,664,0,120,0,151.8,151.8,120,931.427943,0,931.427943,,,,2015-04-27 08:00,2015-05-13 16:00,,2015-01-20 08:00,2015-02-05 16:00,2015-01-20 08:00,2015-02-05 16:00,2015-01-20 08:00,2015-02-05 16:00,2015-04-27 08:00,2015-05-13 16:00,,PT_Normal,,,,,kczh3fJ1BUamk3X0iw8Lfw,GPnHvlm0TOGJubv8c/nAOQ,,,N,0,0,,,2014-04-05 12:28,2014-04-05 13:21,admin,admin,
2989,142732,1749,35853,642,0,N,N,N,CP_Drtn,TT_Task,DT_FixedDUR2,TK_NotStart,BL3-FN-B2-1030,Ceiling Paint,4433,664,0,80,0,39.6,39.6,80,248.94642,0,248.94642,,,,2015-05-09 08:00,2015-05-19 16:00,,2015-02-01 08:00,2015-02-11 16:00,2015-02-01 08:00,2015-02-11 16:00,2015-02-01 08:00,2015-02-11 16:00,2015-05-09 08:00,2015-05-19 16:00,,PT_Normal,,,,,xvmayYlke0K4SEqZZe8rBA,vvTreS3oRl+5kHo2ZeKeKQ,,,N,0,0,,,2014-04-05 12:28,2014-04-05 13:21,admin,admin,
2990,142733,1749,35853,642,0,N,N,N,CP_Drtn,TT_Task,DT_FixedDUR2,TK_NotStart,BL3-FN-B2-1040,Waterproofing,4433,1912,0,40,0,3.3,3.3,40,69.35431,0,69.35431,,,,2015-10-25 08:00,2015-10-29 16:00,,2015-02-12 08:00,2015-02-17 16:00,2015-02-12 08:00,2015-02-17 16:00,2015-02-12 08:00,2015-02-17 16:00,2015-10-25 08:00,2015-10-29 16:00,,PT_Normal,,,,,mDtb508R/kCTwKkWGI+tlg,TM4j4LSzS5ys7P4MttUbPQ,,,N,0,0,,,2014-04-05 12:28,2014-04-05 13:21,admin,admin,
2991,142734,1749,35853,642,0,N,N,N,CP_Drtn,TT_Task,DT_FixedDUR2,TK_NotStart,BL3-FN-B2-1060,Flooring Works,4433,1912,0,160,0,818,818,160,19081.746381,0,19081.746381,,,,2015-10-30 08:00,2015-11-18 16:00,,2015-02-18 08:00,2015-03-12 16:00,2015-02-18 08:00,2015-03-12 16:00,2015-02-18 08:00,2015-03-12 16:00,2015-10-30 08:00,2015-11-18 16:00,,PT_Normal,,,,,qd5tg8ycrky6Kdq91u7XkQ,Dyp/WnJJTMWfy+9o6Idrtg,,,N,0,0,,,2014-04-05 12:28,2014-04-05 13:21,admin,admin,
2992,142735,1749,35853,642,0,N,N,N,CP_Drtn,TT_Task,DT_FixedDUR2,TK_NotStart,BL3-FN-B2-1100,Final Paint,,400,0,80,0,0,0,80,10,0,10,,,,2016-01-14 08:00,2016-01-23 16:00,,2015-11-25 08:00,2015-12-04 16:00,2015-11-25 08:00,2015-12-04 16:00,2015-11-25 08:00,2015-12-04 16:00,2016-01-14 08:00,2016-01-23 16:00,,PT_Normal,,,,,U8TP2+uiYE2vqYZtVDPjSg,fTsfkZ/qRW+oAB0JubxOKg,,,N,0,0,,,2014-04-05 12:28,2014-04-05 13:21,admin,admin,
2993,142736,1749,35853,642,0,N,N,N,CP_Drtn,TT_Task,DT_FixedDUR2,TK_NotStart,BL3-FN-B2-1050,Wall Tiling,4433,664,0,80,0,776,776,80,3453.520054,0,3453.520054,,,,2015-05-20 08:00,2015-05-31 16:00,,2015-02-12 08:00,2015-02-23 16:00,2015-02-12 08:00,2015-02-23 16:00,2015-02-12 08:00,2015-02-23 16:00,2015-05-20 08:00,2015-05-31 16:00,,PT_Normal,,,,,RoOkEF1k0Eq3OAtevVjDHA,9+mjjtlwQqm8rGTtEfrSzw,,,N,0,0,,,2014-04-05 12:28,2014-04-05 13:21,admin,admin,
2994,142737,1749,35853,642,0,N,N,N,CP_Drtn,TT_Task,DT_FixedDUR2,TK_NotStart,BL3-FN-B2-1070,False Ceiling,4433,664,0,120,0,240,240,120,2030,0,2030,,,,2015-06-01 08:00,2015-06-15 16:00,,2015-02-24 08:00,2015-03-12 16:00,2015-02-24 08:00,2015-03-12 16:00,2015-02-24 08:00,2015-03-12 16:00,2015-06-01 08:00,2015-06-15 16:00,,PT_Normal,,,,,rwUfORqhpU2P5j0U4amdpA,Xi9p57JERGWC9FkGTs0JeA,,,N,0,0,,,2014-04-05 12:28,2014-04-05 13:21,admin,admin,
2995,142738,1749,35853,642,0,N,N,N,CP_Drtn,TT_Task,DT_FixedDUR2,TK_NotStart,BL3-FN-B2-1080,Hand Rails for Stairs,4433,664,0,120,0,43,43,120,9498.792932,0,9498.792932,,,,2015-06-16 08:00,2015-06-30 16:00,,2015-03-14 08:00,2015-03-30 16:00,2015-03-14 08:00,2015-03-30 16:00,2015-03-14 08:00,2015-03-30 16:00,2015-06-16 08:00,2015-06-30 16:00,,PT_Normal,,,,,E2QM8Bngk0qE1U8CB4t9rg,gHZdmF+FSk26td9AH4PMUg,,,N,0,0,,,2014-04-05 12:28,2014-04-05 13:21,admin,admin,
2996,142739,1749,35853,642,0,N,N,N,CP_Drtn,TT_Task,DT_FixedDUR2,TK_NotStart,BL3-FN-B2-1090,Doors Installation,,664,0,120,0,0,0,120,22006.109373,0,22006.109373,,,,2015-07-01 08:00,2015-07-15 16:00,,2015-03-31 08:00,2015-04-16 16:00,2015-03-31 08:00,2015-04-16 16:00,2015-03-31 08:00,2015-04-16 16:00,2015-07-01 08:00,2015-07-15 16:00,,PT_Normal,,,,,QFpueLH7IE2uysCR4DsO7w,sCELQpXgRZq24LMvJ7L0UA,,,N,0,0,,,2014-04-05 12:28,2014-04-05 13:21,admin,admin,
2997,142740,1749,35889,642,0,N,N,N,CP_Drtn,TT_Task,DT_FixedDUR2,TK_NotStart,BL3-ST-B1-1000,Reinforcement for Verticals,4433,0,0,96,0,946.624828,946.624828,96,63301.8,0,63301.8,,,,2014-08-07 08:00,2014-08-20 16:00,,2014-08-07 08:00,2014-08-20 16:00,2014-08-07 08:00,2014-08-20 16:00,2014-08-07 08:00,2014-08-20 16:00,2014-08-07 08:00,2014-08-20 16:00,,PT_Normal,,,,,jsgiwg75SEqaEr6krcqqvg,nEyev6/3S4idfeTLQS1NEQ,,,Y,0,0,,,2014-04-05 12:28,2014-04-05 13:21,admin,admin,
2998,142741,1749,35889,642,0,N,N,N,CP_Drtn,TT_Task,DT_FixedDUR2,TK_NotStart,BL3-ST-B1-1020,FW for Verticals,4433,0,0,64,0,7676.563717,7676.563717,64,33757.532,0,33757.532,,,,2014-08-21 08:00,2014-08-30 16:00,,2014-08-21 08:00,2014-08-30 16:00,2014-08-21 08:00,2014-08-30 16:00,2014-08-21 08:00,2014-08-30 16:00,2014-08-21 08:00,2014-08-30 16:00,,PT_Normal,,,,,s2GQEyWYq0W4/JDC4T6IYw,YItZaKDjQfSDL5qEhlHrEQ,,,Y,0,0,,,2014-04-05 12:28,2014-04-05 13:21,admin,admin,
2999,142742,1749,35889,642,0,N,N,N,CP_Drtn,TT_Task,DT_FixedDUR2,TK_NotStart,BL3-ST-B1-1030,Concrete Verticals,4433,0,0,8,0,1446.689392,1446.689392,8,24487.522,0,24487.522,,,,2014-08-31 08:00,2014-08-31 16:00,,2014-08-31 08:00,2014-08-31 16:00,2014-08-31 08:00,2014-08-31 16:00,2014-08-31 08:00,2014-08-31 16:00,2014-08-31 08:00,2014-08-31 16:00,,PT_Normal,,,,,n8zNviggCUaBvjuZEooxYw,ZujN1P7uQIC1Tufogscd8w,,,Y,0,0,,,2014-04-05 12:28,2014-04-05 13:21,admin,admin,
3000,142743,1749,35889,642,0,N,N,N,CP_Drtn,TT_Task,DT_FixedDUR2,TK_NotStart,BL3-ST-B1-1040,FW for Slab,4433,0,0,80,0,11653.247547,11653.247547,80,51242.7736,0,51242.7736,,,,2014-09-01 08:00,2014-09-11 16:00,,2014-09-01 08:00,2014-09-11 16:00,2014-09-01 08:00,2014-09-11 16:00,2014-09-01 08:00,2014-09-11 16:00,2014-09-01 08:00,2014-09-11 16:00,,PT_Normal,,,,,Q0AwRg9+y0SmQlbUqtUIWw,Z7jMb2PmSCyZh9NpNKLyOw,,,Y,0,0,,,2014-04-05 12:28,2014-04-05 13:21,admin,admin,
3001,142744,1749,35889,642,0,N,N,N,CP_Drtn,TT_Task,DT_FixedDUR2,TK_NotStart,BL3-ST-B1-1050,Reinforcement for Slab,4433,0,0,80,0,949.94169,949.94169,80,63521.56,0,63521.56,,,,2014-09-13 08:00,2014-09-23 16:00,,2014-09-13 08:00,2014-09-23 16:00,2014-09-13 08:00,2014-09-23 16:00,2014-09-13 08:00,2014-09-23 16:00,2014-09-13 08:00,2014-09-23 16:00,,PT_Normal,,,,,ESDcmmE7pU26ZpsoxfrQ7A,wBS2P9W0SeiV27wRjGokBg,,,Y,0,0,,,2014-04-05 12:28,2014-04-05 13:21,admin,admin,
3002,142745,1749,35889,642,0,N,N,N,CP_Drtn,TT_Task,DT_FixedDUR2,TK_NotStart,BL3-ST-B1-1070,Concrete for Slab,4433,0,0,8,0,3611.015008,3611.015008,8,61120.684,0,61120.684,,,,2014-09-24 08:00,2014-09-24 16:00,,2014-09-24 08:00,2014-09-24 16:00,2014-09-24 08:00,2014-09-24 16:00,2014-09-24 08:00,2014-09-24 16:00,2014-09-24 08:00,2014-09-24 16:00,,PT_Normal,,,,,gahopa5AQUWtxLxoDJOZQQ,HZysHoT9RNmHxZNrtsL57A,,,Y,0,0,,,2014-04-05 12:28,2014-04-05 13:21,admin,admin,
3003,142746,1749,35889,642,0,N,N,N,CP_Drtn,TT_Task,DT_FixedDUR2,TK_NotStart,BL3-ST-B1-1010,MEP Works in Vertical Element,,64,64,40,0,160,160,40,1803.546829,0,1803.546829,,,,2014-08-25 08:00,2014-08-30 16:00,,2014-08-16 08:00,2014-08-20 16:00,2014-08-16 08:00,2014-08-20 16:00,2014-08-16 08:00,2014-08-20 16:00,2014-08-25 08:00,2014-08-30 16:00,,PT_Normal,,,,,5nSp6vWzXEmJcS+pENZnPQ,8SntprN+QaS22PV8kGI7zg,,,N,0,0,,,2014-04-05 12:28,2014-04-05 13:21,admin,admin,
3004,142747,1749,35889,642,0,N,N,N,CP_Drtn,TT_Task,DT_FixedDUR2,TK_NotStart,BL3-ST-B1-1060,MEP Works in Slab & Beams,,0,0,40,0,320,320,40,3354.018234,0,3354.018234,,,,2014-09-18 08:00,2014-09-23 16:00,,2014-09-18 08:00,2014-09-23 16:00,2014-09-18 08:00,2014-09-23 16:00,2014-09-18 08:00,2014-09-23 16:00,2014-09-18 08:00,2014-09-23 16:00,,PT_Normal,,,,,YMUs46Ju8ESfKHOJbDg0lA,1xEU8TnISH+PmqX4Pvy/NQ,,,Y,0,0,,,2014-04-05 12:28,2014-04-05 13:21,admin,admin,
3005,142748,1749,35887,642,0,N,N,N,CP_Drtn,TT_Task,DT_FixedDUR2,TK_NotStart,BL3-FN-B1-1000,Block Works,4433,152,0,192,0,574.5,574.5,192,7661.840379,0,7661.840379,,,,2015-01-25 08:00,2015-02-21 16:00,,2014-12-31 08:00,2015-01-29 16:00,2014-12-31 08:00,2015-01-29 16:00,2014-12-31 08:00,2015-01-29 16:00,2015-01-25 08:00,2015-02-21 16:00,,PT_Normal,,,,,Es5nOGzjmUmVlbkKDB/YHw,XUcWATwORteowdHcencMJw,,,N,0,0,,,2014-04-05 12:28,2014-04-05 13:21,admin,admin,
3006,142749,1749,35887,642,0,N,N,N,CP_Drtn,TT_Task,DT_FixedDUR2,TK_NotStart,BL3-FN-B1-1010,Plaster,4433,232,0,160,0,738.9,738.9,160,8704.331769,0,8704.331769,,,,2015-03-05 08:00,2015-03-28 16:00,,2015-01-31 08:00,2015-02-22 16:00,2015-01-31 08:00,2015-02-22 16:00,2015-01-31 08:00,2015-02-22 16:00,2015-03-05 08:00,2015-03-28 16:00,,PT_Normal,,,,,WR+Bp/+T5EuT7ncKp09bQw,WRhGHpdvR7KmbZL6Q/VgRQ,,,N,0,0,,,2014-04-05 12:28,2014-04-05 13:21,admin,admin,
3007,142750,1749,35887,642,0,N,N,N,CP_Drtn,TT_Task,DT_FixedDUR2,TK_NotStart,BL3-FN-B1-1020,Paint 1st Coat,4433,448,0,120,0,151.8,151.8,120,931.427943,0,931.427943,,,,2015-05-11 08:00,2015-05-27 16:00,,2015-03-07 08:00,2015-03-23 16:00,2015-03-07 08:00,2015-03-23 16:00,2015-03-07 08:00,2015-03-23 16:00,2015-05-11 08:00,2015-05-27 16:00,,PT_Normal,,,,,0vKu1605gkWU29gRJRqVyA,Qcq4lZ9mSUelKcEimYp6AA,,,N,0,0,,,2014-04-05 12:28,2014-04-05 13:21,admin,admin,
3008,142751,1749,35887,642,0,N,N,N,CP_Drtn,TT_Task,DT_FixedDUR2,TK_NotStart,BL3-FN-B1-1030,Ceiling Paint,4433,448,0,80,0,39.6,39.6,80,248.94642,0,248.94642,,,,2015-05-23 08:00,2015-06-02 16:00,,2015-03-18 08:00,2015-03-29 16:00,2015-03-18 08:00,2015-03-29 16:00,2015-03-18 08:00,2015-03-29 16:00,2015-05-23 08:00,2015-06-02 16:00,,PT_Normal,,,,,N16+/+weO0a6D/YpJiIv6g,tVG96GSQThCFh3mA9Q0lbg,,,N,0,0,,,2014-04-05 12:28,2014-04-05 13:21,admin,admin,
3009,142752,1749,35887,642,0,N,N,N,CP_Drtn,TT_Task,DT_FixedDUR2,TK_NotStart,BL3-FN-B1-1040,Waterproofing,4433,776,0,40,0,3.3,3.3,40,69.35431,0,69.35431,,,,2015-07-14 08:00,2015-07-18 16:00,,2015-03-30 08:00,2015-04-04 16:00,2015-03-30 08:00,2015-04-04 16:00,2015-03-30 08:00,2015-04-04 16:00,2015-07-14 08:00,2015-07-18 16:00,,PT_Normal,,,,,hHmYO823OU+3onMOrzAHLw,RU0Lw6YwR66ckzTfkDi0Gg,,,N,0,0,,,2014-04-05 12:28,2014-04-05 13:21,admin,admin,
3010,142753,1749,35887,642,0,N,N,N,CP_Drtn,TT_Task,DT_FixedDUR2,TK_NotStart,BL3-FN-B1-1060,Flooring Works,4433,776,0,192,0,818,818,192,19085.746381,0,19085.746381,,,,2015-07-19 08:00,2015-08-11 16:00,,2015-04-05 08:00,2015-05-02 16:00,2015-04-05 08:00,2015-05-02 16:00,2015-04-05 08:00,2015-05-02 16:00,2015-07-19 08:00,2015-08-11 16:00,,PT_Normal,,,,,ZTJTkx60PUmM8nahEviPrA,ythVSLMnQDKtKZUcUmub+w,,,N,0,0,,,2014-04-05 12:28,2014-04-05 13:21,admin,admin,
3011,142754,1749,35887,642,0,N,N,N,CP_Drtn,TT_Task,DT_FixedDUR2,TK_NotStart,BL3-FN-B1-1100,Final Paint,,368,0,80,0,0,0,80,10,0,10,,,,2016-01-16 08:00,2016-01-25 16:00,,2015-12-01 08:00,2015-12-10 16:00,2015-12-01 08:00,2015-12-10 16:00,2015-12-01 08:00,2015-12-10 16:00,2016-01-16 08:00,2016-01-25 16:00,,PT_Normal,,,,,kH1Jj5eXd0uhD0BcaIrllA,yWxJlJoIRJKddu2V0bE3qA,,,N,0,0,,,2014-04-05 12:28,2014-04-05 13:21,admin,admin,
3012,142755,1749,35887,642,0,N,N,N,CP_Drtn,TT_Task,DT_FixedDUR2,TK_NotStart,BL3-FN-B1-1050,Wall Tiling,4433,448,0,80,0,776,776,80,3453.520054,0,3453.520054,,,,2015-06-03 08:00,2015-06-12 16:00,,2015-03-30 08:00,2015-04-09 16:00,2015-03-30 08:00,2015-04-09 16:00,2015-03-30 08:00,2015-04-09 16:00,2015-06-03 08:00,2015-06-12 16:00,,PT_Normal,,,,,xADQ3txc/UmnMwOMaztwMA,3QfDpQdSQ6aTLGJERgY+5A,,,N,0,0,,,2014-04-05 12:28,2014-04-05 13:21,admin,admin,
3013,142756,1749,35887,642,0,N,N,N,CP_Drtn,TT_Task,DT_FixedDUR2,TK_NotStart,BL3-FN-B1-1070,False Ceiling,4433,448,0,144,0,240,240,144,2031.815688,0,2031.815688,,,,2015-06-13 08:00,2015-06-30 16:00,,2015-04-11 08:00,2015-04-30 16:00,2015-04-11 08:00,2015-04-30 16:00,2015-04-11 08:00,2015-04-30 16:00,2015-06-13 08:00,2015-06-30 16:00,,PT_Normal,,,,,bb92uZdvWUKhRTRNy/bABA,80LT8Zz4QHKlmcn/hOH8Mw,,,N,0,0,,,2014-04-05 12:28,2014-04-05 13:21,admin,admin,
3014,142757,1749,35887,642,0,N,N,N,CP_Drtn,TT_Task,DT_FixedDUR2,TK_NotStart,BL3-FN-B1-1080,Hand Rails for Stairs,4433,448,0,120,0,43,43,120,9498.792932,0,9498.792932,,,,2015-07-01 08:00,2015-07-15 16:00,,2015-05-02 08:00,2015-05-18 16:00,2015-05-02 08:00,2015-05-18 16:00,2015-05-02 08:00,2015-05-18 16:00,2015-07-01 08:00,2015-07-15 16:00,,PT_Normal,,,,,gxgAHPVHyEKTqD7EYhUICA,x+6SccsMTOKA8ThiysgemA,,,N,0,0,,,2014-04-05 12:28,2014-04-05 13:21,admin,admin,
3015,142758,1749,35887,642,0,N,N,N,CP_Drtn,TT_Task,DT_FixedDUR2,TK_NotStart,BL3-FN-B1-1090,Doors Installation,,448,0,120,0,0,0,120,22006.109373,0,22006.109373,,,,2015-07-16 08:00,2015-07-30 16:00,,2015-05-19 08:00,2015-06-04 16:00,2015-05-19 08:00,2015-06-04 16:00,2015-05-19 08:00,2015-06-04 16:00,2015-07-16 08:00,2015-07-30 16:00,,PT_Normal,,,,,nSI88J2h1USg4CVqUI78LA,uzMcIkQyTRefwfzzt83zAA,,,N,0,0,,,2014-04-05 12:28,2014-04-05 13:21,admin,admin,
3016,142759,1749,35882,642,0,N,N,N,CP_Drtn,TT_Task,DT_FixedDUR2,TK_NotStart,BL3-ST-GF-1000,Reinforcement for Verticals,4433,0,0,96,0,946.624828,946.624828,96,63301.8,0,63301.8,,,,2014-09-25 08:00,2014-10-13 16:00,,2014-09-25 08:00,2014-10-13 16:00,2014-09-25 08:00,2014-10-13 16:00,2014-09-25 08:00,2014-10-13 16:00,2014-09-25 08:00,2014-10-13 16:00,,PT_Normal,,,,,OyujlVKYP0azBFmQIwWMvw,D0liifoJSvqIWuBLo6/WXA,,,Y,0,0,,,2014-04-05 12:28,2014-04-05 13:21,admin,admin,
3017,142760,1749,35882,642,0,N,N,N,CP_Drtn,TT_Task,DT_FixedDUR2,TK_NotStart,BL3-ST-GF-1020,FW for Verticals,4433,0,0,64,0,10174.740525,10174.740525,64,44740.61,0,44740.61,,,,2014-10-14 08:00,2014-10-22 16:00,,2014-10-14 08:00,2014-10-22 16:00,2014-10-14 08:00,2014-10-22 16:00,2014-10-14 08:00,2014-10-22 16:00,2014-10-14 08:00,2014-10-22 16:00,,PT_Normal,,,,,tfZrvP7lEECrWkiwQXlKnQ,R41b5av5QrifepOUvpLzyQ,,,Y,0,0,,,2014-04-05 12:28,2014-04-05 13:21,admin,admin,
3018,142761,1749,35882,642,0,N,N,N,CP_Drtn,TT_Task,DT_FixedDUR2,TK_NotStart,BL3-ST-GF-1030,Concrete Verticals,4433,0,0,8,0,1796.618601,1796.618601,8,30410.3893,0,30410.3893,,,,2014-10-23 08:00,2014-10-23 16:00,,2014-10-23 08:00,2014-10-23 16:00,2014-10-23 08:00,2014-10-23 16:00,2014-10-23 08:00,2014-10-23 16:00,2014-10-23 08:00,2014-10-23 16:00,,PT_Normal,,,,,yBa+V/JijkmQIIRdFwJ18A,WnLggd0EREGbi+hg2c4djA,,,Y,0,0,,,2014-04-05 12:28,2014-04-05 13:21,admin,admin,
3019,142762,1749,35882,642,0,N,N,N,CP_Drtn,TT_Task,DT_FixedDUR2,TK_NotStart,BL3-ST-GF-1040,FW for Slab,4433,0,0,80,0,10800.878403,10800.878403,80,47495.386,0,47495.386,,,,2014-10-26 08:00,2014-11-08 16:00,,2014-10-26 08:00,2014-11-08 16:00,2014-10-26 08:00,2014-11-08 16:00,2014-10-26 08:00,2014-11-08 16:00,2014-10-26 08:00,2014-11-08 16:00,,PT_Normal,,,,,kpMU0dyt7EGrlAynTCeNPg,XF5bdO2iTdW2gH1dn+2i6A,,,Y,0,0,,,2014-04-05 12:28,2014-04-05 13:21,admin,admin,
3020,142763,1749,35882,642,0,N,N,N,CP_Drtn,TT_Task,DT_FixedDUR2,TK_NotStart,BL3-ST-GF-1050,Reinforcement for Slab,4433,0,0,80,0,949.94169,949.94169,80,63521.56,0,63521.56,,,,2014-11-09 08:00,2014-11-19 16:00,,2014-11-09 08:00,2014-11-19 16:00,2014-11-09 08:00,2014-11-19 16:00,2014-11-09 08:00,2014-11-19 16:00,2014-11-09 08:00,2014-11-19 16:00,,PT_Normal,,,,,eTA6PdA2N06mzh6Mex8eJw,aEl6ODzFSKaPeT4ZKj/FXA,,,Y,0,0,,,2014-04-05 12:28,2014-04-05 13:21,admin,admin,
3021,142764,1749,35882,642,0,N,N,N,CP_Drtn,TT_Task,DT_FixedDUR2,TK_NotStart,BL3-ST-GF-1070,Concrete for Slab,4433,0,0,8,0,3323.145023,3323.145023,8,56248.225,0,56248.225,,,,2014-11-20 08:00,2014-11-20 16:00,,2014-11-20 08:00,2014-11-20 16:00,2014-11-20 08:00,2014-11-20 16:00,2014-11-20 08:00,2014-11-20 16:00,2014-11-20 08:00,2014-11-20 16:00,,PT_Normal,,,,,c8WwrOBEEUyVeG0ttXsRmA,vxlfdR+ZSAC/ZdhCrXea6A,,,Y,0,0,,,2014-04-05 12:28,2014-04-05 13:21,admin,admin,
3022,142765,1749,35882,642,0,N,N,N,CP_Drtn,TT_Task,DT_FixedDUR2,TK_NotStart,BL3-ST-GF-1010,MEP Works in Vertical Element,,64,64,40,0,160,160,40,1803.546829,0,1803.546829,,,,2014-10-18 08:00,2014-10-22 16:00,,2014-10-04 10:00,2014-10-13 16:00,2014-10-04 10:00,2014-10-13 16:00,2014-10-04 10:00,2014-10-13 16:00,2014-10-18 08:00,2014-10-22 16:00,,PT_Normal,,,,,+Y0mX6AJYkqdSQ0nsLLdHA,e6yb3f0iRf6VdhQalV1Pxg,,,N,0,0,,,2014-04-05 12:28,2014-04-05 13:21,admin,admin,
3023,142766,1749,35882,642,0,N,N,N,CP_Drtn,TT_Task,DT_FixedDUR2,TK_NotStart,BL3-ST-GF-1060,MEP Works in Slab & Beams,,0,0,40,0,320,320,40,3354.018234,0,3354.018234,,,,2014-11-15 08:00,2014-11-19 16:00,,2014-11-15 08:00,2014-11-19 16:00,2014-11-15 08:00,2014-11-19 16:00,2014-11-15 08:00,2014-11-19 16:00,2014-11-15 08:00,2014-11-19 16:00,,PT_Normal,,,,,LnjW9hF2yE+61pQKuCG6GQ,+XEE8+GNRwKfrPCa9LIvgw,,,Y,0,0,,,2014-04-05 12:28,2014-04-05 13:21,admin,admin,
3024,142767,1749,35794,642,0,N,N,N,CP_Drtn,TT_Task,DT_FixedDUR2,TK_NotStart,BL3-FN-GF-1000,Block Works,4433,56,0,192,0,2029,2029,192,27011.036007,0,27011.036007,,,,2015-02-19 08:00,2015-03-18 16:00,,2015-02-11 08:00,2015-03-10 16:00,2015-02-11 08:00,2015-03-10 16:00,2015-02-11 08:00,2015-03-10 16:00,2015-02-19 08:00,2015-03-18 16:00,,PT_Normal,,,,,mg0xGR9x706GDxSi6tXf8g,02YxGIbWQfSw+eD27hx3xg,,,N,0,0,,,2014-04-05 12:28,2014-04-05 13:21,admin,admin,
3025,142768,1749,35794,642,0,N,N,N,CP_Drtn,TT_Task,DT_FixedDUR2,TK_NotStart,BL3-FN-GF-1010,Plaster,4433,112,0,168,0,3285,3285,168,38629.972636,0,38629.972636,,,,2015-03-28 08:00,2015-04-20 16:00,,2015-03-11 08:00,2015-04-04 16:00,2015-03-11 08:00,2015-04-04 16:00,2015-03-11 08:00,2015-04-04 16:00,2015-03-28 08:00,2015-04-20 16:00,,PT_Normal,,,,,N14kUyX/WEKFCC3SsyNZgA,ZvT1z5ChRk+4LJ8kVLGnbQ,,,N,0,0,,,2014-04-05 12:28,2014-04-05 13:21,admin,admin,
3026,142769,1749,35794,642,0,N,N,N,CP_Drtn,TT_Task,DT_FixedDUR2,TK_NotStart,BL3-FN-GF-1020,Paint 1st Coat,4433,312,0,120,0,839,839,120,5081.716375,0,5081.716375,,,,2015-06-01 08:00,2015-06-15 16:00,,2015-04-16 08:00,2015-05-03 16:00,2015-04-16 08:00,2015-05-03 16:00,2015-04-16 08:00,2015-05-03 16:00,2015-06-01 08:00,2015-06-15 16:00,,PT_Normal,,,,,apHm+t7U8UGrFZC5u0L+kQ,JwJiz7kMQhe+K+NcgWL0Yw,,,N,0,0,,,2014-04-05 12:28,2014-04-05 13:21,admin,admin,
3027,142770,1749,35794,642,0,N,N,N,CP_Drtn,TT_Task,DT_FixedDUR2,TK_NotStart,BL3-FN-GF-1030,Ceiling Paint,4433,312,0,80,0,38,38,80,238.06264,0,238.06264,,,,2015-06-11 08:00,2015-06-20 16:00,,2015-04-28 08:00,2015-05-09 16:00,2015-04-28 08:00,2015-05-09 16:00,2015-04-28 08:00,2015-05-09 16:00,2015-06-11 08:00,2015-06-20 16:00,,PT_Normal,,,,,Du43uTuVi0eMXX9/48OVow,Rh+++XRxQHy/62Dj0Fdr/w,,,N,0,0,,,2014-04-05 12:28,2014-04-05 13:21,admin,admin,
3028,142771,1749,35794,642,0,N,N,N,CP_Drtn,TT_Task,DT_FixedDUR2,TK_NotStart,BL3-FN-GF-1040,Waterproofing,4433,624,0,40,0,6.6,6.6,40,134.83764,0,134.83764,,,,2015-07-30 08:00,2015-08-03 16:00,,2015-05-10 08:00,2015-05-14 16:00,2015-05-10 08:00,2015-05-14 16:00,2015-05-10 08:00,2015-05-14 16:00,2015-07-30 08:00,2015-08-03 16:00,,PT_Normal,,,,,h0ezYIShGUq42Djl5wzKOQ,Sbhf9BLpS4ie2IUNC7PLxg,,,N,0,0,,,2014-04-05 12:28,2014-04-05 13:21,admin,admin,
3029,142772,1749,35794,642,0,N,N,N,CP_Drtn,TT_Task,DT_FixedDUR2,TK_NotStart,BL3-FN-GF-1060,Flooring Works,4433,624,0,160,0,2431,2431,160,56669.517742,0,56669.517742,,,,2015-08-04 08:00,2015-08-23 16:00,,2015-05-16 08:00,2015-06-06 16:00,2015-05-16 08:00,2015-06-06 16:00,2015-05-16 08:00,2015-06-06 16:00,2015-08-04 08:00,2015-08-23 16:00,,PT_Normal,,,,,rHnaUzjU0EahlHoDkIBXYg,4X6g1SZtRGGwkq09iaF7vw,,,N,0,0,,,2014-04-05 12:28,2014-04-05 13:21,admin,admin,
3030,142773,1749,35794,642,0,N,N,N,CP_Drtn,TT_Task,DT_FixedDUR2,TK_NotStart,BL3-FN-GF-1100,Final Paint,,336,0,80,0,0,0,80,10,0,10,,,,2016-01-18 08:00,2016-01-27 16:00,,2015-12-07 08:00,2015-12-16 16:00,2015-12-07 08:00,2015-12-16 16:00,2015-12-07 08:00,2015-12-16 16:00,2016-01-18 08:00,2016-01-27 16:00,,PT_Normal,,,,,gd7TSqsMDUu7qTYyINwp2A,U3S6A3MxRl+CQ2jeu6xzVQ,,,N,0,0,,,2014-04-05 12:28,2014-04-05 13:21,admin,admin,
3031,142774,1749,35794,642,0,N,N,N,CP_Drtn,TT_Task,DT_FixedDUR2,TK_NotStart,BL3-FN-GF-1050,Wall Tiling,4433,312,0,80,0,1610,1610,80,7153.667027,0,7153.667027,,,,2015-06-21 08:00,2015-06-30 16:00,,2015-05-10 08:00,2015-05-20 16:00,2015-05-10 08:00,2015-05-20 16:00,2015-05-10 08:00,2015-05-20 16:00,2015-06-21 08:00,2015-06-30 16:00,,PT_Normal,,,,,8z5JSTJgmk6xum1FkyT9AA,mD0n+mhpTV+0FNYjzsMAlw,,,N,0,0,,,2014-04-05 12:28,2014-04-05 13:21,admin,admin,
3032,142775,1749,35794,642,0,N,N,N,CP_Drtn,TT_Task,DT_FixedDUR2,TK_NotStart,BL3-FN-GF-1070,False Ceiling,4433,312,0,120,0,6015,6015,120,50486.165353,0,50486.165353,,,,2015-07-01 08:00,2015-07-15 16:00,,2015-05-21 08:00,2015-06-06 16:00,2015-05-21 08:00,2015-06-06 16:00,2015-05-21 08:00,2015-06-06 16:00,2015-07-01 08:00,2015-07-15 16:00,,PT_Normal,,,,,7QK1G3LaJUOG+j65zRpFGg,6fqMvdeITyy+eN7/COpPRQ,,,N,0,0,,,2014-04-05 12:28,2014-04-05 13:21,admin,admin,
3033,142776,1749,35794,642,0,N,N,N,CP_Drtn,TT_Task,DT_FixedDUR2,TK_NotStart,BL3-FN-GF-1080,Hand Rails for Stairs,,312,0,120,0,0,0,120,9541.792932,0,9541.792932,,,,2015-07-16 08:00,2015-07-30 16:00,,2015-06-07 08:00,2015-06-21 16:00,2015-06-07 08:00,2015-06-21 16:00,2015-06-07 08:00,2015-06-21 16:00,2015-07-16 08:00,2015-07-30 16:00,,PT_Normal,,,,,PUrrgPEztkWqLEdvCVoJgA,8Y5GNkh4R3yq0189TX2CfQ,,,N,0,0,,,2014-04-05 12:28,2014-04-05 13:21,admin,admin,
3034,142777,1749,35794,642,0,N,N,N,CP_Drtn,TT_Task,DT_FixedDUR2,TK_NotStart,BL3-FN-GF-1090,Doors Installation/ Aluminum Doors,,312,0,120,0,0,0,120,28230.412996,0,28230.412996,,,,2015-07-31 08:00,2015-08-14 16:00,,2015-06-22 08:00,2015-07-06 16:00,2015-06-22 08:00,2015-07-06 16:00,2015-06-22 08:00,2015-07-06 16:00,2015-07-31 08:00,2015-08-14 16:00,,PT_Normal,,,,,yrbtkGf/I0Sb/4LnmNlQhg,fG/l1YCiRHS8t8PDRbQwDg,,,N,0,0,,,2014-04-05 12:28,2014-04-05 13:21,admin,admin,
3035,142778,1749,35869,642,0,N,N,N,CP_Drtn,TT_Task,DT_FixedDUR2,TK_NotStart,BL3-ST-1F-1000,Reinforcement for Verticals,4433,0,0,64,0,842.201246,842.201246,64,56316.208727,0,56316.208727,,,,2014-11-22 08:00,2014-11-30 16:00,,2014-11-22 08:00,2014-11-30 16:00,2014-11-22 08:00,2014-11-30 16:00,2014-11-22 08:00,2014-11-30 16:00,2014-11-22 08:00,2014-11-30 16:00,,PT_Normal,,,,,HRTQiOb2KEOllk5EWcBUrw,vAXxJElEQS65eMFgvYXB7g,,,Y,0,0,,,2014-04-05 12:28,2014-04-05 13:21,admin,admin,
3036,142779,1749,35869,642,0,N,N,N,CP_Drtn,TT_Task,DT_FixedDUR2,TK_NotStart,BL3-ST-1F-1020,FW for Verticals,4433,0,0,64,0,10174.740525,10174.740525,64,44740.61,0,44740.61,,,,2014-12-01 08:00,2014-12-09 16:00,,2014-12-01 08:00,2014-12-09 16:00,2014-12-01 08:00,2014-12-09 16:00,2014-12-01 08:00,2014-12-09 16:00,2014-12-01 08:00,2014-12-09 16:00,,PT_Normal,,,,,0NJKVJ6jnk68gISJsiYBSw,u1lNiQYUTtmhNE/wgQPTwg,,,Y,0,0,,,2014-04-05 12:28,2014-04-05 13:21,admin,admin,
3037,142780,1749,35869,642,0,N,N,N,CP_Drtn,TT_Task,DT_FixedDUR2,TK_NotStart,BL3-ST-1F-1030,Concrete Verticals,4433,0,0,8,0,2271.971051,2271.971051,8,38456.158,0,38456.158,,,,2014-12-10 08:00,2014-12-10 16:00,,2014-12-10 08:00,2014-12-10 16:00,2014-12-10 08:00,2014-12-10 16:00,2014-12-10 08:00,2014-12-10 16:00,2014-12-10 08:00,2014-12-10 16:00,,PT_Normal,,,,,0WbBZvBbM0m3QtPTeuhQKw,MtXNjbXGSPSNlUi0Hx0H3w,,,Y,0,0,,,2014-04-05 12:28,2014-04-05 13:21,admin,admin,
3038,142781,1749,35869,642,0,N,N,N,CP_Drtn,TT_Task,DT_FixedDUR2,TK_NotStart,BL3-ST-1F-1040,FW for Slab,4433,0,0,64,0,12784.687194,12784.687194,64,56215.0772,0,56215.0772,,,,2014-12-11 08:00,2014-12-20 16:00,,2014-12-11 08:00,2014-12-20 16:00,2014-12-11 08:00,2014-12-20 16:00,2014-12-11 08:00,2014-12-20 16:00,2014-12-11 08:00,2014-12-20 16:00,,PT_Normal,,,,,wfyIwENCNUOMKEutYkQUug,71cB365sT5K+L8ZHlrcP7w,,,Y,0,0,,,2014-04-05 12:28,2014-04-05 13:21,admin,admin,
3039,142782,1749,35869,642,0,N,N,N,CP_Drtn,TT_Task,DT_FixedDUR2,TK_NotStart,BL3-ST-1F-1050,Reinforcement for Slab,4433,0,0,64,0,1629.170164,1629.170164,64,108931.6736,0,108931.6736,,,,2014-12-21 08:00,2014-12-29 16:00,,2014-12-21 08:00,2014-12-29 16:00,2014-12-21 08:00,2014-12-29 16:00,2014-12-21 08:00,2014-12-29 16:00,2014-12-21 08:00,2014-12-29 16:00,,PT_Normal,,,,,I2uzR/MKIkKo77oQT4I4XQ,nFDh4HfHTpmYrsCnOUKtGQ,,,Y,0,0,,,2014-04-05 12:28,2014-04-05 13:21,admin,admin,
3040,142783,1749,35869,642,0,N,N,N,CP_Drtn,TT_Task,DT_FixedDUR2,TK_NotStart,BL3-ST-1F-1070,Concrete for Slab,4433,0,0,8,0,4220.190306,4220.190306,8,71431.525,0,71431.525,,,,2014-12-30 08:00,2014-12-30 16:00,,2014-12-30 08:00,2014-12-30 16:00,2014-12-30 08:00,2014-12-30 16:00,2014-12-30 08:00,2014-12-30 16:00,2014-12-30 08:00,2014-12-30 16:00,,PT_Normal,,,,,8/tRquXu+0eVAjLbLHBQUQ,O8bdDP72Q7SDC9y26F/YAQ,,,Y,0,0,,,2014-04-05 12:28,2014-04-05 13:21,admin,admin,
3041,142784,1749,35869,642,0,N,N,N,CP_Drtn,TT_Task,DT_FixedDUR2,TK_NotStart,BL3-ST-1F-1010,MEP Works in Vertical Element,,64,64,40,0,160,160,40,1803.546829,0,1803.546829,,,,2014-12-04 08:00,2014-12-09 16:00,,2014-11-25 08:00,2014-11-30 16:00,2014-11-25 08:00,2014-11-30 16:00,2014-11-25 08:00,2014-11-30 16:00,2014-12-04 08:00,2014-12-09 16:00,,PT_Normal,,,,,6DMLbXGb7ke0eUpubpOT3w,TCTCukFvTi6QSIiTyPbkKg,,,N,0,0,,,2014-04-05 12:28,2014-04-05 13:21,admin,admin,
3042,142785,1749,35869,642,0,N,N,N,CP_Drtn,TT_Task,DT_FixedDUR2,TK_NotStart,BL3-ST-1F-1060,MEP Works in Slab & Beams,,0,0,40,0,320,320,40,3354.018234,0,3354.018234,,,,2014-12-24 08:00,2014-12-29 16:00,,2014-12-24 08:00,2014-12-29 16:00,2014-12-24 08:00,2014-12-29 16:00,2014-12-24 08:00,2014-12-29 16:00,2014-12-24 08:00,2014-12-29 16:00,,PT_Normal,,,,,pWy3wTwmRkOrhT+aOwy1yQ,96x6j6bLTDCAMhGuTnryLw,,,Y,0,0,,,2014-04-05 12:28,2014-04-05 13:21,admin,admin,
3043,142786,1749,35809,642,0,N,N,N,CP_Drtn,TT_Task,DT_FixedDUR2,TK_NotStart,BL3-FN-1F-1000,Block Works,4433,56,0,192,0,2428.2,2428.2,192,32306.605338,0,32306.605338,,,,2015-03-17 08:00,2015-04-13 16:00,,2015-03-09 08:00,2015-04-05 16:00,2015-03-09 08:00,2015-04-05 16:00,2015-03-09 08:00,2015-04-05 16:00,2015-03-17 08:00,2015-04-13 16:00,,PT_Normal,,,,,8SaieFwHSUSo11/+B1KWiQ,P6Yu/ugVTPeNlyYFDEofHQ,,,N,0,0,,,2014-04-05 12:28,2014-04-05 13:21,admin,admin,
3044,142787,1749,35809,642,0,N,N,N,CP_Drtn,TT_Task,DT_FixedDUR2,TK_NotStart,BL3-FN-1F-1010,Plaster,4433,104,0,168,0,3417,3417,168,40181.363097,0,40181.363097,,,,2015-04-21 08:00,2015-05-14 16:00,,2015-04-06 08:00,2015-04-29 16:00,2015-04-06 08:00,2015-04-29 16:00,2015-04-06 08:00,2015-04-29 16:00,2015-04-21 08:00,2015-05-14 16:00,,PT_Normal,,,,,wPEtA/F9oEellS/34ZHM7A,W5AD6r0/T82g1Hjx5IANKw,,,N,0,0,,,2014-04-05 12:28,2014-04-05 13:21,admin,admin,
3045,142788,1749,35809,642,0,N,N,N,CP_Drtn,TT_Task,DT_FixedDUR2,TK_NotStart,BL3-FN-1F-1020,Paint 1st Coat,4433,296,0,120,0,880,880,120,5325.924042,0,5325.924042,,,,2015-06-16 08:00,2015-06-30 16:00,,2015-05-06 08:00,2015-05-23 16:00,2015-05-06 08:00,2015-05-23 16:00,2015-05-06 08:00,2015-05-23 16:00,2015-06-16 08:00,2015-06-30 16:00,,PT_Normal,,,,,Jb/KmNEA3UKb3qexLXAUYA,E7QOYVrVQka6NE7osvawYQ,,,N,0,0,,,2014-04-05 12:28,2014-04-05 13:21,admin,admin,
3046,142789,1749,35809,642,0,N,N,N,CP_Drtn,TT_Task,DT_FixedDUR2,TK_NotStart,BL3-FN-1F-1030,Ceiling Paint,4433,296,0,80,0,37.8,37.8,80,238.06264,0,238.06264,,,,2015-06-26 08:00,2015-07-05 16:00,,2015-05-18 08:00,2015-05-28 16:00,2015-05-18 08:00,2015-05-28 16:00,2015-05-18 08:00,2015-05-28 16:00,2015-06-26 08:00,2015-07-05 16:00,,PT_Normal,,,,,mOFxLzVMzUOBVW28XVr9dA,KltZ8kPmS12+fikW7Agaxg,,,N,0,0,,,2014-04-05 12:28,2014-04-05 13:21,admin,admin,
3047,142790,1749,35809,642,0,N,N,N,CP_Drtn,TT_Task,DT_FixedDUR2,TK_NotStart,BL3-FN-1F-1040,Waterproofing,4433,600,0,40,0,6.6,6.6,40,134.83764,0,134.83764,,,,2015-08-13 08:00,2015-08-17 16:00,,2015-05-30 08:00,2015-06-03 16:00,2015-05-30 08:00,2015-06-03 16:00,2015-05-30 08:00,2015-06-03 16:00,2015-08-13 08:00,2015-08-17 16:00,,PT_Normal,,,,,71K0HLwEvkSnEeE5SeOGpw,rcHJ/VWeRAK6UlmYuLt6+A,,,N,0,0,,,2014-04-05 12:28,2014-04-05 13:21,admin,admin,
3048,142791,1749,35809,642,0,N,N,N,CP_Drtn,TT_Task,DT_FixedDUR2,TK_NotStart,BL3-FN-1F-1060,Flooring Works,4433,600,0,160,0,2076,2076,160,48401.682548,0,48401.682548,,,,2015-08-18 08:00,2015-09-06 16:00,,2015-06-04 08:00,2015-06-23 16:00,2015-06-04 08:00,2015-06-23 16:00,2015-06-04 08:00,2015-06-23 16:00,2015-08-18 08:00,2015-09-06 16:00,,PT_Normal,,,,,9Bbkraf2vEeYvj2168YdJg,knRQ+rHKSiu3NxTrHCxvvg,,,N,0,0,,,2014-04-05 12:28,2014-04-05 13:21,admin,admin,
3049,142792,1749,35809,642,0,N,N,N,CP_Drtn,TT_Task,DT_FixedDUR2,TK_NotStart,BL3-FN-1F-1100,Final Paint,,304,0,80,0,0,0,80,10,0,10,,,,2016-01-20 08:00,2016-01-29 16:00,,2015-12-13 08:00,2015-12-22 16:00,2015-12-13 08:00,2015-12-22 16:00,2015-12-13 08:00,2015-12-22 16:00,2016-01-20 08:00,2016-01-29 16:00,,PT_Normal,,,,,FvscH43fI0mmv8NCJhYPUQ,bXHoJPfgSiez7V7+7o1pDg,,,N,0,0,,,2014-04-05 12:28,2014-04-05 13:21,admin,admin,
3050,142793,1749,35809,642,0,N,N,N,CP_Drtn,TT_Task,DT_FixedDUR2,TK_NotStart,BL3-FN-1F-1050,Wall Tiling,4433,296,0,80,0,1610,1610,80,7153.328318,0,7153.328318,,,,2015-07-06 08:00,2015-07-15 16:00,,2015-05-30 08:00,2015-06-08 16:00,2015-05-30 08:00,2015-06-08 16:00,2015-05-30 08:00,2015-06-08 16:00,2015-07-06 08:00,2015-07-15 16:00,,PT_Normal,,,,,J0jCsH3uxkKmjd7J3NTltA,cyvZ7hi2R+mCoG+uaK/s3g,,,N,0,0,,,2014-04-05 12:28,2014-04-05 13:21,admin,admin,
3051,142794,1749,35809,642,0,N,N,N,CP_Drtn,TT_Task,DT_FixedDUR2,TK_NotStart,BL3-FN-1F-1070,False Ceiling,4433,296,0,120,0,5925,5925,120,49731.074792,0,49731.074792,,,,2015-07-16 08:00,2015-07-30 16:00,,2015-06-09 08:00,2015-06-23 16:00,2015-06-09 08:00,2015-06-23 16:00,2015-06-09 08:00,2015-06-23 16:00,2015-07-16 08:00,2015-07-30 16:00,,PT_Normal,,,,,wqRkSbjnTE62iQ0XVqeKKg,ivCRyyvzQIWWDDPvl67Xlg,,,N,0,0,,,2014-04-05 12:28,2014-04-05 13:21,admin,admin,
3052,142795,1749,35809,642,0,N,N,N,CP_Drtn,TT_Task,DT_FixedDUR2,TK_NotStart,BL3-FN-1F-1080,Hand Rails for Stairs,4433,296,0,120,0,43,43,120,9498.792932,0,9498.792932,,,,2015-07-31 08:00,2015-08-14 16:00,,2015-06-24 08:00,2015-07-08 16:00,2015-06-24 08:00,2015-07-08 16:00,2015-06-24 08:00,2015-07-08 16:00,2015-07-31 08:00,2015-08-14 16:00,,PT_Normal,,,,,4IIXpy1rf0u8whHSMxNVoQ,f0bQdbeeQuemsrOOCfQEsA,,,N,0,0,,,2014-04-05 12:28,2014-04-05 13:21,admin,admin,
3053,142796,1749,35809,642,0,N,N,N,CP_Drtn,TT_Task,DT_FixedDUR2,TK_NotStart,BL3-FN-1F-1090,Doors Installation,,296,0,120,0,0,0,120,22006.109373,0,22006.109373,,,,2015-08-15 08:00,2015-08-29 16:00,,2015-07-09 08:00,2015-07-23 16:00,2015-07-09 08:00,2015-07-23 16:00,2015-07-09 08:00,2015-07-23 16:00,2015-08-15 08:00,2015-08-29 16:00,,PT_Normal,,,,,65xcPlxeRU+Rrp+3ghNTPA,QkF2Zo1eT9adCgWhoYWaUw,,,N,0,0,,,2014-04-05 12:28,2014-04-05 13:21,admin,admin,
3054,142797,1749,35715,642,0,N,N,N,CP_Drtn,TT_Task,DT_FixedDUR2,TK_NotStart,BL3-ST-2F-1000,Reinforcement for Verticals,4433,0,0,64,0,842.201246,842.201246,64,56316.208727,0,56316.208727,,,,2014-12-31 08:00,2015-01-11 16:00,,2014-12-31 08:00,2015-01-11 16:00,2014-12-31 08:00,2015-01-11 16:00,2014-12-31 08:00,2015-01-11 16:00,2014-12-31 08:00,2015-01-11 16:00,,PT_Normal,,,,,fjXfeVwM9UKueYz4lEoB9A,aZnPM86LQXW7vOoy19qXNA,,,Y,0,0,,,2014-04-05 12:28,2014-04-05 13:21,admin,admin,
3055,142798,1749,35715,642,0,N,N,N,CP_Drtn,TT_Task,DT_FixedDUR2,TK_NotStart,BL3-ST-2F-1020,FW for Verticals,4433,0,0,64,0,9432.01634,9432.01634,64,41475.2696,0,41475.2696,,,,2015-01-12 08:00,2015-01-20 16:00,,2015-01-12 08:00,2015-01-20 16:00,2015-01-12 08:00,2015-01-20 16:00,2015-01-12 08:00,2015-01-20 16:00,2015-01-12 08:00,2015-01-20 16:00,,PT_Normal,,,,,O63+KuOvnEq9Kt26ASSXpw,90GwB1ciRxG+8sMSTwRYXA,,,Y,0,0,,,2014-04-05 12:28,2014-04-05 13:21,admin,admin,
3056,142799,1749,35715,642,0,N,N,N,CP_Drtn,TT_Task,DT_FixedDUR2,TK_NotStart,BL3-ST-2F-1030,Concrete Verticals,4433,0,0,8,0,2105.609926,2105.609926,8,35640.346,0,35640.346,,,,2015-01-21 08:00,2015-01-21 16:00,,2015-01-21 08:00,2015-01-21 16:00,2015-01-21 08:00,2015-01-21 16:00,2015-01-21 08:00,2015-01-21 16:00,2015-01-21 08:00,2015-01-21 16:00,,PT_Normal,,,,,3legMc2uVU2FaHecljfGnQ,l+L6vfUzQ0u2dAr5On8S3A,,,Y,0,0,,,2014-04-05 12:28,2014-04-05 13:21,admin,admin,
3057,142800,1749,35715,642,0,N,N,N,CP_Drtn,TT_Task,DT_FixedDUR2,TK_NotStart,BL3-ST-2F-1040,FW for Slab,4433,0,0,64,0,13733.951882,13733.951882,64,60388.46,0,60388.46,,,,2015-01-22 08:00,2015-01-31 16:00,,2015-01-22 08:00,2015-01-31 16:00,2015-01-22 08:00,2015-01-31 16:00,2015-01-22 08:00,2015-01-31 16:00,2015-01-22 08:00,2015-01-31 16:00,,PT_Normal,,,,,LzzQfIoInkKjQz5hfuJwpg,HSkPdsGRSxOy/pj2sc5X9A,,,Y,0,0,,,2014-04-05 12:28,2014-04-05 13:21,admin,admin,
3058,142801,1749,35715,642,0,N,N,N,CP_Drtn,TT_Task,DT_FixedDUR2,TK_NotStart,BL3-ST-2F-1050,Reinforcement for Slab,4433,0,0,64,0,1629.170164,1629.170164,64,108931.6736,0,108931.6736,,,,2015-02-01 08:00,2015-02-09 16:00,,2015-02-01 08:00,2015-02-09 16:00,2015-02-01 08:00,2015-02-09 16:00,2015-02-01 08:00,2015-02-09 16:00,2015-02-01 08:00,2015-02-09 16:00,,PT_Normal,,,,,cx6HsKaZUUCu5vjDKDsUrg,+0C6UC7KQ42zzTDxINUL7g,,,Y,0,0,,,2014-04-05 12:28,2014-04-05 13:21,admin,admin,
3059,142802,1749,35715,642,0,N,N,N,CP_Drtn,TT_Task,DT_FixedDUR2,TK_NotStart,BL3-ST-2F-1070,Concrete for Slab,4433,0,0,8,0,4026.102326,4026.102326,8,68146.411,0,68146.411,,,,2015-02-10 08:00,2015-02-10 16:00,,2015-02-10 08:00,2015-02-10 16:00,2015-02-10 08:00,2015-02-10 16:00,2015-02-10 08:00,2015-02-10 16:00,2015-02-10 08:00,2015-02-10 16:00,,PT_Normal,,,,,gBFMEcIM5E+oip33bS6jQQ,dUJWHM2lTsi3U4doJj6gcQ,,,Y,0,0,,,2014-04-05 12:28,2014-04-05 13:21,admin,admin,
3060,142803,1749,35715,642,0,N,N,N,CP_Drtn,TT_Task,DT_FixedDUR2,TK_NotStart,BL3-ST-2F-1010,MEP Works in Vertical Element,,64,64,40,0,160,160,40,1803.546829,0,1803.546829,,,,2015-01-15 08:00,2015-01-20 16:00,,2015-01-06 08:00,2015-01-11 16:00,2015-01-06 08:00,2015-01-11 16:00,2015-01-06 08:00,2015-01-11 16:00,2015-01-15 08:00,2015-01-20 16:00,,PT_Normal,,,,,hIIAWdVBEES+kf4/6gIs/Q,UMgmOnDpTUeLzLS9Dm9JxA,,,N,0,0,,,2014-04-05 12:28,2014-04-05 13:21,admin,admin,
3061,142804,1749,35715,642,0,N,N,N,CP_Drtn,TT_Task,DT_FixedDUR2,TK_NotStart,BL3-ST-2F-1060,MEP Works in Slab & Beams,,0,0,40,0,320,320,40,3354.018234,0,3354.018234,,,,2015-02-04 08:00,2015-02-09 16:00,,2015-02-04 08:00,2015-02-09 16:00,2015-02-04 08:00,2015-02-09 16:00,2015-02-04 08:00,2015-02-09 16:00,2015-02-04 08:00,2015-02-09 16:00,,PT_Normal,,,,,Ea6N24PTJUOeF7vKUl3MmQ,KhLuahSvSpq/bqEfLz8wjw,,,Y,0,0,,,2014-04-05 12:28,2014-04-05 13:21,admin,admin,
3062,142805,1749,35711,642,0,N,N,N,CP_Drtn,TT_Task,DT_FixedDUR2,TK_NotStart,BL3-FN-2F-1000,Block Works,4433,72,0,168,0,2428.2,2428.2,168,32303.605338,0,32303.605338,,,,2015-04-14 08:00,2015-05-07 16:00,,2015-04-04 08:00,2015-04-27 16:00,2015-04-04 08:00,2015-04-27 16:00,2015-04-04 08:00,2015-04-27 16:00,2015-04-14 08:00,2015-05-07 16:00,,PT_Normal,,,,,/HM0EyDOWESq5fqSt9qBpA,8wKdFKb+StyLcYctXtEFbQ,,,N,0,0,,,2014-04-05 12:28,2014-04-05 13:21,admin,admin,
3063,142806,1749,35711,642,0,N,N,N,CP_Drtn,TT_Task,DT_FixedDUR2,TK_NotStart,BL3-FN-2F-1010,Plaster,4433,128,0,160,0,3417,3417,160,40180.363097,0,40180.363097,,,,2015-05-17 08:00,2015-06-07 16:00,,2015-04-28 08:00,2015-05-20 16:00,2015-04-28 08:00,2015-05-20 16:00,2015-04-28 08:00,2015-05-20 16:00,2015-05-17 08:00,2015-06-07 16:00,,PT_Normal,,,,,tMGu3UlTiEuxgFx+KaFvNQ,HNkLfjRKQ2qU+2PmVN1hqw,,,N,0,0,,,2014-04-05 12:28,2014-04-05 13:21,admin,admin,
3064,142807,1749,35711,642,0,N,N,N,CP_Drtn,TT_Task,DT_FixedDUR2,TK_NotStart,BL3-FN-2F-1020,Paint 1st Coat,4433,312,0,120,0,880,880,120,5325.924042,0,5325.924042,,,,2015-07-01 08:00,2015-07-15 16:00,,2015-05-21 08:00,2015-06-06 16:00,2015-05-21 08:00,2015-06-06 16:00,2015-05-21 08:00,2015-06-06 16:00,2015-07-01 08:00,2015-07-15 16:00,,PT_Normal,,,,,TTFq3H+f6EGP2VWT7AYwaw,+ZspCpCoQGSDip80ESgRow,,,N,0,0,,,2014-04-05 12:28,2014-04-05 13:21,admin,admin,
3065,142808,1749,35711,642,0,N,N,N,CP_Drtn,TT_Task,DT_FixedDUR2,TK_NotStart,BL3-FN-2F-1030,Ceiling Paint,4433,312,0,80,0,37.8,37.8,80,238.06264,0,238.06264,,,,2015-07-11 08:00,2015-07-20 16:00,,2015-06-02 08:00,2015-06-11 16:00,2015-06-02 08:00,2015-06-11 16:00,2015-06-02 08:00,2015-06-11 16:00,2015-07-11 08:00,2015-07-20 16:00,,PT_Normal,,,,,nFZcvz4tBEyZJxvc+sW4gg,zB07I5zgT3W0qSFGn4Rfsg,,,N,0,0,,,2014-04-05 12:28,2014-04-05 13:21,admin,admin,
3066,142809,1749,35711,642,0,N,N,N,CP_Drtn,TT_Task,DT_FixedDUR2,TK_NotStart,BL3-FN-2F-1040,Waterproofing,4433,608,0,40,0,6.6,6.6,40,134.83764,0,134.83764,,,,2015-08-27 08:00,2015-08-31 16:00,,2015-06-12 08:00,2015-06-16 16:00,2015-06-12 08:00,2015-06-16 16:00,2015-06-12 08:00,2015-06-16 16:00,2015-08-27 08:00,2015-08-31 16:00,,PT_Normal,,,,,v1myMCxen0erHLmSGSJKxQ,8G0BpDn/RC6VWJFQZBDK4w,,,N,0,0,,,2014-04-05 12:28,2014-04-05 13:21,admin,admin,
3067,142810,1749,35711,642,0,N,N,N,CP_Drtn,TT_Task,DT_FixedDUR2,TK_NotStart,BL3-FN-2F-1060,Flooring Works,4433,608,0,160,0,2076,2076,160,48401.682548,0,48401.682548,,,,2015-09-01 08:00,2015-09-20 16:00,,2015-06-17 08:00,2015-07-06 16:00,2015-06-17 08:00,2015-07-06 16:00,2015-06-17 08:00,2015-07-06 16:00,2015-09-01 08:00,2015-09-20 16:00,,PT_Normal,,,,,J2869amCbkWL01cs7LMavg,ts9DRwz2R5WzCW9IJ/1UUw,,,N,0,0,,,2014-04-05 12:28,2014-04-05 13:21,admin,admin,
3068,142811,1749,35711,642,0,N,N,N,CP_Drtn,TT_Task,DT_FixedDUR2,TK_NotStart,BL3-FN-2F-1100,Final Paint,,272,0,80,0,0,0,80,10,0,10,,,,2016-01-22 08:00,2016-01-31 16:00,,2015-12-19 08:00,2015-12-28 16:00,2015-12-19 08:00,2015-12-28 16:00,2015-12-19 08:00,2015-12-28 16:00,2016-01-22 08:00,2016-01-31 16:00,,PT_Normal,,,,,GGghJvp91EKmfXJVoUUVGw,5Rx/61UKTTWMjYkOf16T4w,,,N,0,0,,,2014-04-05 12:28,2014-04-05 13:21,admin,admin,
3069,142812,1749,35711,642,0,N,N,N,CP_Drtn,TT_Task,DT_FixedDUR2,TK_NotStart,BL3-FN-2F-1050,Wall Tiling,4433,312,0,80,0,1610,1610,80,7153.328318,0,7153.328318,,,,2015-07-21 08:00,2015-07-30 16:00,,2015-06-12 08:00,2015-06-21 16:00,2015-06-12 08:00,2015-06-21 16:00,2015-06-12 08:00,2015-06-21 16:00,2015-07-21 08:00,2015-07-30 16:00,,PT_Normal,,,,,xPNVSfbH7UexJZgs+905dA,IvGWgPxvSIaTGxygk3x0mQ,,,N,0,0,,,2014-04-05 12:28,2014-04-05 13:21,admin,admin,
3070,142813,1749,35711,642,0,N,N,N,CP_Drtn,TT_Task,DT_FixedDUR2,TK_NotStart,BL3-FN-2F-1070,False Ceiling,4433,312,0,120,0,5925,5925,120,49731.074792,0,49731.074792,,,,2015-07-31 08:00,2015-08-14 16:00,,2015-06-22 08:00,2015-07-06 16:00,2015-06-22 08:00,2015-07-06 16:00,2015-06-22 08:00,2015-07-06 16:00,2015-07-31 08:00,2015-08-14 16:00,,PT_Normal,,,,,bRzVnH24kkeWMxP23LYU0w,ge/P0KXsTnKHYinY2FfARw,,,N,0,0,,,2014-04-05 12:28,2014-04-05 13:21,admin,admin,
3071,142814,1749,35711,642,0,N,N,N,CP_Drtn,TT_Task,DT_FixedDUR2,TK_NotStart,BL3-FN-2F-1080,Hand Rails for Stairs,4433,312,16,120,0,43,43,120,9498.792932,0,9498.792932,,,,2015-08-15 08:00,2015-08-29 16:00,,2015-07-07 08:00,2015-07-21 16:00,2015-07-07 08:00,2015-07-21 16:00,2015-07-07 08:00,2015-07-21 16:00,2015-08-15 08:00,2015-08-29 16:00,,PT_Normal,,,,,uvQ8ed8l10OL1Lh8BQbSeA,TtWmpjU+Sziejgf52xsWNg,,,N,0,0,,,2014-04-05 12:28,2014-04-05 13:21,admin,admin,
3072,142815,1749,35711,642,0,N,N,N,CP_Drtn,TT_Task,DT_FixedDUR2,TK_NotStart,BL3-FN-2F-1090,Doors Installation,,296,0,120,0,0,0,120,22006.109373,0,22006.109373,,,,2015-08-30 08:00,2015-09-13 16:00,,2015-07-24 08:00,2015-08-07 16:00,2015-07-24 08:00,2015-08-07 16:00,2015-07-24 08:00,2015-08-07 16:00,2015-08-30 08:00,2015-09-13 16:00,,PT_Normal,,,,,dAf7Q9ml9kqHfc2YoAuVXw,2FIm8JsZQtyHc9hKb+GWOQ,,,N,0,0,,,2014-04-05 12:28,2014-04-05 13:21,admin,admin,
3073,142816,1749,35720,642,0,N,N,N,CP_Drtn,TT_Task,DT_FixedDUR2,TK_NotStart,BL3-ST-3F-1000,Reinforcement for Verticals,4433,0,0,40,0,842.201246,842.201246,40,56313.208727,0,56313.208727,,,,2015-02-11 08:00,2015-02-16 16:00,,2015-02-11 08:00,2015-02-16 16:00,2015-02-11 08:00,2015-02-16 16:00,2015-02-11 08:00,2015-02-16 16:00,2015-02-11 08:00,2015-02-16 16:00,,PT_Normal,,,,,lMIPnHQNdkyMkRo8LHe58A,KFle36znfE+T+cqljjnMOw,,,Y,0,0,,,2014-04-05 12:28,2014-04-05 13:21,admin,admin,
3074,142817,1749,35720,642,0,N,N,N,CP_Drtn,TT_Task,DT_FixedDUR2,TK_NotStart,BL3-ST-3F-1020,FW for Verticals,4433,0,0,40,0,9250.408023,9250.408023,40,40673.84,0,40673.84,,,,2015-02-17 08:00,2015-02-22 16:00,,2015-02-17 08:00,2015-02-22 16:00,2015-02-17 08:00,2015-02-22 16:00,2015-02-17 08:00,2015-02-22 16:00,2015-02-17 08:00,2015-02-22 16:00,,PT_Normal,,,,,O6R1ezp6Dkak6U5smQ9TwA,2J1ll9O6TEyyCzu3ts0jNg,,,Y,0,0,,,2014-04-05 12:28,2014-04-05 13:21,admin,admin,
3075,142818,1749,35720,642,0,N,N,N,CP_Drtn,TT_Task,DT_FixedDUR2,TK_NotStart,BL3-ST-3F-1030,Concrete Verticals,4433,0,0,8,0,2003.265215,2003.265215,8,33908.0695,0,33908.0695,,,,2015-02-23 08:00,2015-02-23 16:00,,2015-02-23 08:00,2015-02-23 16:00,2015-02-23 08:00,2015-02-23 16:00,2015-02-23 08:00,2015-02-23 16:00,2015-02-23 08:00,2015-02-23 16:00,,PT_Normal,,,,,YR358SPp1E6BKGJ1HjfZKw,ug56X2NvVUKBRpv/ied5NQ,,,Y,0,0,,,2014-04-05 12:28,2014-04-05 13:21,admin,admin,
3076,142819,1749,35720,642,0,N,N,N,CP_Drtn,TT_Task,DT_FixedDUR2,TK_NotStart,BL3-ST-3F-1040,FW for Slab,4433,0,0,40,0,16202.380057,16202.380057,40,71237.75,0,71237.75,,,,2015-02-24 08:00,2015-03-01 16:00,,2015-02-24 08:00,2015-03-01 16:00,2015-02-24 08:00,2015-03-01 16:00,2015-02-24 08:00,2015-03-01 16:00,2015-02-24 08:00,2015-03-01 16:00,,PT_Normal,,,,,H6niGdjEHEuBPvpq0TC/yQ,zHAz4Bb1+0qTk10Q+a/d2g,,,Y,0,0,,,2014-04-05 12:28,2014-04-05 13:21,admin,admin,
3077,142820,1749,35720,642,0,N,N,N,CP_Drtn,TT_Task,DT_FixedDUR2,TK_NotStart,BL3-ST-3F-1050,Reinforcement for Slab,4433,0,0,40,0,1629.170164,1629.170164,40,108928.6736,0,108928.6736,,,,2015-03-02 08:00,2015-03-07 16:00,,2015-03-02 08:00,2015-03-07 16:00,2015-03-02 08:00,2015-03-07 16:00,2015-03-02 08:00,2015-03-07 16:00,2015-03-02 08:00,2015-03-07 16:00,,PT_Normal,,,,,KqJxW4s75E6OHnTI+IDDww,izzxOR+GUUmadwSiT6Laiw,,,Y,0,0,,,2014-04-05 12:28,2014-04-05 13:21,admin,admin,
3078,142821,1749,35720,642,0,N,N,N,CP_Drtn,TT_Task,DT_FixedDUR2,TK_NotStart,BL3-ST-3F-1070,Concrete for Slab,4433,0,0,8,0,4319.680781,4319.680781,8,73115.491,0,73115.491,,,,2015-03-08 08:00,2015-03-08 16:00,,2015-03-08 08:00,2015-03-08 16:00,2015-03-08 08:00,2015-03-08 16:00,2015-03-08 08:00,2015-03-08 16:00,2015-03-08 08:00,2015-03-08 16:00,,PT_Normal,,,,,D8ZIZjK+w0e36iNBWNDDwg,wOgEHc1NWE2yR2dWfGaKWA,,,Y,0,0,,,2014-04-05 12:28,2014-04-05 13:21,admin,admin,
3079,142822,1749,35720,642,0,N,N,N,CP_Drtn,TT_Task,DT_FixedDUR2,TK_NotStart,BL3-ST-3F-1010,MEP Works in Vertical Element,,40,40,40,0,160,160,40,1803.546829,0,1803.546829,,,,2015-02-17 08:00,2015-02-22 16:00,,2015-02-11 08:00,2015-02-16 16:00,2015-02-11 08:00,2015-02-16 16:00,2015-02-11 08:00,2015-02-16 16:00,2015-02-17 08:00,2015-02-22 16:00,,PT_Normal,,,,,eGOGDzA41k6tKQW0Jn5/Zg,Pg/KGgJbuUqFW6WDmPSuew,,,N,0,0,,,2014-04-05 12:28,2014-04-05 13:21,admin,admin,
3080,142823,1749,35720,642,0,N,N,N,CP_Drtn,TT_Task,DT_FixedDUR2,TK_NotStart,BL3-ST-3F-1060,MEP Works in Slab & Beams,,0,0,40,0,320,320,40,3354.018234,0,3354.018234,,,,2015-03-02 08:00,2015-03-07 16:00,,2015-03-02 08:00,2015-03-07 16:00,2015-03-02 08:00,2015-03-07 16:00,2015-03-02 08:00,2015-03-07 16:00,2015-03-02 08:00,2015-03-07 16:00,,PT_Normal,,,,,49nbE3TAc0SuvoaYVxkzHw,lhfNdUbHCkuM6tU1iQSbYg,,,Y,0,0,,,2014-04-05 12:28,2014-04-05 13:21,admin,admin,
3081,142824,1749,35699,642,0,N,N,N,CP_Drtn,TT_Task,DT_FixedDUR2,TK_NotStart,BL3-FN-3F-1000,Block Works,4433,72,0,160,0,1961,1961,160,26090.269357,0,26090.269357,,,,2015-05-10 08:00,2015-06-01 16:00,,2015-04-29 08:00,2015-05-21 16:00,2015-04-29 08:00,2015-05-21 16:00,2015-04-29 08:00,2015-05-21 16:00,2015-05-10 08:00,2015-06-01 16:00,,PT_Normal,,,,,mrNNt/CCBUKES/ndlmCKMw,n87PwdpEBkqUBcsEW5T0Pw,,,N,0,0,,,2014-04-05 12:28,2014-04-05 13:21,admin,admin,
3082,142825,1749,35699,642,0,N,N,N,CP_Drtn,TT_Task,DT_FixedDUR2,TK_NotStart,BL3-FN-3F-1010,Plaster,4433,144,0,144,0,2961,2961,144,34819.003969,0,34819.003969,,,,2015-06-11 08:00,2015-06-28 16:00,,2015-05-23 08:00,2015-06-10 16:00,2015-05-23 08:00,2015-06-10 16:00,2015-05-23 08:00,2015-06-10 16:00,2015-06-11 08:00,2015-06-28 16:00,,PT_Normal,,,,,80n0Qp8EOUG+YZGUZ1zyoQ,GRhqv4Q44kCPtRGAhrxKCw,,,N,0,0,,,2014-04-05 12:28,2014-04-05 13:21,admin,admin,
3083,142826,1749,35699,642,0,N,N,N,CP_Drtn,TT_Task,DT_FixedDUR2,TK_NotStart,BL3-FN-3F-1020,Paint 1st Coat,4433,280,0,120,0,748,748,120,4527.704805,0,4527.704805,,,,2015-07-16 08:00,2015-07-30 16:00,,2015-06-11 08:00,2015-06-25 16:00,2015-06-11 08:00,2015-06-25 16:00,2015-06-11 08:00,2015-06-25 16:00,2015-07-16 08:00,2015-07-30 16:00,,PT_Normal,,,,,AnzVYpggK06TJJYt1OmUjw,kxnuuwLpm0m3i2xbd+MM/w,,,N,0,0,,,2014-04-05 12:28,2014-04-05 13:21,admin,admin,
3084,142827,1749,35699,642,0,N,N,N,CP_Drtn,TT_Task,DT_FixedDUR2,TK_NotStart,BL3-FN-3F-1030,Ceiling Paint,4433,280,0,80,0,39.6,39.6,80,248.90126,0,248.90126,,,,2015-07-26 08:00,2015-08-04 16:00,,2015-06-21 08:00,2015-06-30 16:00,2015-06-21 08:00,2015-06-30 16:00,2015-06-21 08:00,2015-06-30 16:00,2015-07-26 08:00,2015-08-04 16:00,,PT_Normal,,,,,uZo31hFsTUSZCDGXCtultw,JpGS5eRa3kuwCPPgqd8lmg,,,N,0,0,,,2014-04-05 12:28,2014-04-05 13:21,admin,admin,
3085,142828,1749,35699,642,0,N,N,N,CP_Drtn,TT_Task,DT_FixedDUR2,TK_NotStart,BL3-FN-3F-1040,Waterproofing,4433,568,0,40,0,13,13,40,263.54626,0,263.54626,,,,2015-09-10 08:00,2015-09-14 16:00,,2015-07-01 08:00,2015-07-05 16:00,2015-07-01 08:00,2015-07-05 16:00,2015-07-01 08:00,2015-07-05 16:00,2015-09-10 08:00,2015-09-14 16:00,,PT_Normal,,,,,XkFLZsGhAUujXZraYVBccw,G7wSAreF3EGx4fabzJNrxQ,,,N,0,0,,,2014-04-05 12:28,2014-04-05 13:21,admin,admin,
3086,142829,1749,35699,642,0,N,N,N,CP_Drtn,TT_Task,DT_FixedDUR2,TK_NotStart,BL3-FN-3F-1060,Flooring Works,4433,568,0,160,0,1708,1708,160,39827.769224,0,39827.769224,,,,2015-09-15 08:00,2015-10-04 16:00,,2015-07-06 08:00,2015-07-25 16:00,2015-07-06 08:00,2015-07-25 16:00,2015-07-06 08:00,2015-07-25 16:00,2015-09-15 08:00,2015-10-04 16:00,,PT_Normal,,,,,CyVCGAQWZ0mlxPhS54EjKg,3TLQaifVAEaUssrbavh83Q,,,N,0,0,,,2014-04-05 12:28,2014-04-05 13:21,admin,admin,
3087,142830,1749,35699,642,0,N,N,N,CP_Drtn,TT_Task,DT_FixedDUR2,TK_NotStart,BL3-FN-3F-1100,Final Paint,,240,0,80,0,0,0,80,10,0,10,,,,2016-01-24 08:00,2016-02-02 16:00,,2015-12-25 08:00,2016-01-03 16:00,2015-12-25 08:00,2016-01-03 16:00,2015-12-25 08:00,2016-01-03 16:00,2016-01-24 08:00,2016-02-02 16:00,,PT_Normal,,,,,NY3xQmyUJUWTN9wpAauoHA,K9mwbj1jCk6s4AGQhgewmg,,,N,0,0,,,2014-04-05 12:28,2014-04-05 13:21,admin,admin,
3088,142831,1749,35699,642,0,N,N,N,CP_Drtn,TT_Task,DT_FixedDUR2,TK_NotStart,BL3-FN-3F-1050,Wall Tiling,4433,280,0,80,0,1770,1770,80,6931.814013,0,6931.814013,,,,2015-08-05 08:00,2015-08-14 16:00,,2015-07-01 08:00,2015-07-10 16:00,2015-07-01 08:00,2015-07-10 16:00,2015-07-01 08:00,2015-07-10 16:00,2015-08-05 08:00,2015-08-14 16:00,,PT_Normal,,,,,iDqqb+UiaE2i8CCA7NcJ4g,+E7MN8qbR020yshH0c1DZw,,,N,0,0,,,2014-04-05 12:28,2014-04-05 13:21,admin,admin,
3089,142832,1749,35699,642,0,N,N,N,CP_Drtn,TT_Task,DT_FixedDUR2,TK_NotStart,BL3-FN-3F-1070,False Ceiling,4433,280,0,120,0,5485,5485,120,46039.056785,0,46039.056785,,,,2015-08-15 08:00,2015-08-29 16:00,,2015-07-11 08:00,2015-07-25 16:00,2015-07-11 08:00,2015-07-25 16:00,2015-07-11 08:00,2015-07-25 16:00,2015-08-15 08:00,2015-08-29 16:00,,PT_Normal,,,,,HqfIJgF5fUSzVcDSjXzGYw,jnhizpGgYEOWDtjZceTJ9w,,,N,0,0,,,2014-04-05 12:28,2014-04-05 13:21,admin,admin,
3090,142833,1749,35699,642,0,N,N,N,CP_Drtn,TT_Task,DT_FixedDUR2,TK_NotStart,BL3-FN-3F-1080,Hand Rails for Stairs,4433,280,0,120,0,43,43,120,9498.792932,0,9498.792932,,,,2015-08-30 08:00,2015-09-13 16:00,,2015-07-26 08:00,2015-08-09 16:00,2015-07-26 08:00,2015-08-09 16:00,2015-07-26 08:00,2015-08-09 16:00,2015-08-30 08:00,2015-09-13 16:00,,PT_Normal,,,,,pFhsbBNIUUuJ7wIXFRm22A,+FAXeeg+LEm5XKkXg6rCFA,,,N,0,0,,,2014-04-05 12:28,2014-04-05 13:21,admin,admin,
3091,142834,1749,35699,642,0,N,N,N,CP_Drtn,TT_Task,DT_FixedDUR2,TK_NotStart,BL3-FN-3F-1090,Doors Installation,,280,0,120,0,0,0,120,22006.109373,0,22006.109373,,,,2015-09-14 08:00,2015-09-28 16:00,,2015-08-10 08:00,2015-08-24 16:00,2015-08-10 08:00,2015-08-24 16:00,2015-08-10 08:00,2015-08-24 16:00,2015-09-14 08:00,2015-09-28 16:00,,PT_Normal,,,,,ilvBQF5DW0u6b3UuAhm2kw,P7wgIZr7uUGmuIKyV/xuYQ,,,N,0,0,,,2014-04-05 12:28,2014-04-05 13:21,admin,admin,
3092,142835,1749,35783,642,0,N,N,N,CP_Drtn,TT_Task,DT_FixedDUR2,TK_NotStart,BL3-ST-4F-1000,Reinforcement for Verticals,4433,0,0,40,0,842.201246,842.201246,40,56313.208727,0,56313.208727,,,,2015-03-09 08:00,2015-03-14 16:00,,2015-03-09 08:00,2015-03-14 16:00,2015-03-09 08:00,2015-03-14 16:00,2015-03-09 08:00,2015-03-14 16:00,2015-03-09 08:00,2015-03-14 16:00,,PT_Normal,,,,,KJeAsftt/k2OushgMA/8iQ,2fvzclOQTRifULcGf1bxQw,,,Y,0,0,,,2014-04-05 12:28,2014-04-05 13:21,admin,admin,
3093,142836,1749,35783,642,0,N,N,N,CP_Drtn,TT_Task,DT_FixedDUR2,TK_NotStart,BL3-ST-4F-1020,FW for Verticals,4433,0,0,40,0,9250.408023,9250.408023,40,40673.84,0,40673.84,,,,2015-03-15 08:00,2015-03-19 16:00,,2015-03-15 08:00,2015-03-19 16:00,2015-03-15 08:00,2015-03-19 16:00,2015-03-15 08:00,2015-03-19 16:00,2015-03-15 08:00,2015-03-19 16:00,,PT_Normal,,,,,yhU1QoWeU0m9Xwec+CaO7Q,rogY0HYdRz+buPj4/SBAOw,,,Y,0,0,,,2014-04-05 12:28,2014-04-05 13:21,admin,admin,
3094,142837,1749,35783,642,0,N,N,N,CP_Drtn,TT_Task,DT_FixedDUR2,TK_NotStart,BL3-ST-4F-1030,Concrete Verticals,4433,0,0,8,0,2003.265215,2003.265215,8,33908.0695,0,33908.0695,,,,2015-03-21 08:00,2015-03-21 16:00,,2015-03-21 08:00,2015-03-21 16:00,2015-03-21 08:00,2015-03-21 16:00,2015-03-21 08:00,2015-03-21 16:00,2015-03-21 08:00,2015-03-21 16:00,,PT_Normal,,,,,3LKzvPNQTkiqx7oSYp5YLQ,CmYUBgeXRJ6KSKud3KzBbg,,,Y,0,0,,,2014-04-05 12:28,2014-04-05 13:21,admin,admin,
3095,142838,1749,35783,642,0,N,N,N,CP_Drtn,TT_Task,DT_FixedDUR2,TK_NotStart,BL3-ST-4F-1040,FW for Slab,4433,0,0,40,0,16202.380057,16202.380057,40,71237.75,0,71237.75,,,,2015-03-22 08:00,2015-03-26 16:00,,2015-03-22 08:00,2015-03-26 16:00,2015-03-22 08:00,2015-03-26 16:00,2015-03-22 08:00,2015-03-26 16:00,2015-03-22 08:00,2015-03-26 16:00,,PT_Normal,,,,,SgT5h5slUUSR/7BYtVwMGQ,EUc5Yke+T4OXJBTbODfC9A,,,Y,0,0,,,2014-04-05 12:28,2014-04-05 13:21,admin,admin,
3096,142839,1749,35783,642,0,N,N,N,CP_Drtn,TT_Task,DT_FixedDUR2,TK_NotStart,BL3-ST-4F-1050,Reinforcement for Slab,4433,0,0,40,0,1629.170164,1629.170164,40,108928.6736,0,108928.6736,,,,2015-03-28 08:00,2015-04-01 16:00,,2015-03-28 08:00,2015-04-01 16:00,2015-03-28 08:00,2015-04-01 16:00,2015-03-28 08:00,2015-04-01 16:00,2015-03-28 08:00,2015-04-01 16:00,,PT_Normal,,,,,M8u66jQgvUSigS9ACHwO0g,Tp8GtRefSNa25W5aQ/2AKg,,,Y,0,0,,,2014-04-05 12:28,2014-04-05 13:21,admin,admin,
3097,142840,1749,35783,642,0,N,N,N,CP_Drtn,TT_Task,DT_FixedDUR2,TK_NotStart,BL3-ST-4F-1070,Concrete for Slab,4433,0,0,8,0,4319.680781,4319.680781,8,73115.491,0,73115.491,,,,2015-04-02 08:00,2015-04-02 16:00,,2015-04-02 08:00,2015-04-02 16:00,2015-04-02 08:00,2015-04-02 16:00,2015-04-02 08:00,2015-04-02 16:00,2015-04-02 08:00,2015-04-02 16:00,,PT_Normal,,,,,r7WQKwdSakG6WxwGbq+KpQ,gqJX65cHT9WgJRpMjEfgzQ,,,Y,0,0,,,2014-04-05 12:28,2014-04-05 13:21,admin,admin,
3098,142841,1749,35783,642,0,N,N,N,CP_Drtn,TT_Task,DT_FixedDUR2,TK_NotStart,BL3-ST-4F-1010,MEP Works in Vertical Element,,40,40,40,0,160,160,40,1803.546829,0,1803.546829,,,,2015-03-15 08:00,2015-03-19 16:00,,2015-03-09 08:00,2015-03-14 16:00,2015-03-09 08:00,2015-03-14 16:00,2015-03-09 08:00,2015-03-14 16:00,2015-03-15 08:00,2015-03-19 16:00,,PT_Normal,,,,,dG58Xgp0Lkq7RhDLNBuFBQ,jeIW9xYRQaGO1J8PezP+Mg,,,N,0,0,,,2014-04-05 12:28,2014-04-05 13:21,admin,admin,
3099,142842,1749,35783,642,0,N,N,N,CP_Drtn,TT_Task,DT_FixedDUR2,TK_NotStart,BL3-ST-4F-1060,MEP Works in Slab & Beams,,0,0,40,0,320,320,40,3354.018234,0,3354.018234,,,,2015-03-28 08:00,2015-04-01 16:00,,2015-03-28 08:00,2015-04-01 16:00,2015-03-28 08:00,2015-04-01 16:00,2015-03-28 08:00,2015-04-01 16:00,2015-03-28 08:00,2015-04-01 16:00,,PT_Normal,,,,,Q5m1Chhgy0GcFaEg9W+Pvg,WnEc+Rt7QNG0ScXbfuSM3g,,,Y,0,0,,,2014-04-05 12:28,2014-04-05 13:21,admin,admin,
3100,142843,1749,35685,642,0,N,N,N,CP_Drtn,TT_Task,DT_FixedDUR2,TK_NotStart,BL3-FN-4F-1000,Block Works,4433,72,0,160,0,1746.48,1746.48,160,23239.034752,0,23239.034752,,,,2015-06-04 08:00,2015-06-23 16:00,,2015-05-25 08:00,2015-06-14 16:00,2015-05-25 08:00,2015-06-14 16:00,2015-05-25 08:00,2015-06-14 16:00,2015-06-04 08:00,2015-06-23 16:00,,PT_Normal,,,,,7zKe9fTEfEWsPN8l/UbvfA,5fbYVAwLR6WM0ILVapR0dg,,,N,0,0,,,2014-04-05 12:28,2014-04-05 13:21,admin,admin,
3101,142844,1749,35685,642,0,N,N,N,CP_Drtn,TT_Task,DT_FixedDUR2,TK_NotStart,BL3-FN-4F-1010,Plaster,4433,160,0,120,0,2773.5,2773.5,120,32612.3092,0,32612.3092,,,,2015-07-05 08:00,2015-07-19 16:00,,2015-06-15 08:00,2015-06-29 16:00,2015-06-15 08:00,2015-06-29 16:00,2015-06-15 08:00,2015-06-29 16:00,2015-07-05 08:00,2015-07-19 16:00,,PT_Normal,,,,,z2SS3+7zK0izCAJ13skOyg,Eoe9s/GQSxCH34s+LRuPUw,,,N,0,0,,,2014-04-05 12:28,2014-04-05 13:21,admin,admin,
3102,142845,1749,35685,642,0,N,N,N,CP_Drtn,TT_Task,DT_FixedDUR2,TK_NotStart,BL3-FN-4F-1020,Paint 1st Coat,4433,248,0,120,0,832,832,120,5032.378071,0,5032.378071,,,,2015-07-31 08:00,2015-08-14 16:00,,2015-06-30 08:00,2015-07-14 16:00,2015-06-30 08:00,2015-07-14 16:00,2015-06-30 08:00,2015-07-14 16:00,2015-07-31 08:00,2015-08-14 16:00,,PT_Normal,,,,,AV3T8PaI3UquozdqnP8ILg,93IGsNj9QUOLraX2SJohPA,,,N,0,0,,,2014-04-05 12:28,2014-04-05 13:21,admin,admin,
3103,142846,1749,35685,642,0,N,N,N,CP_Drtn,TT_Task,DT_FixedDUR2,TK_NotStart,BL3-FN-4F-1030,Ceiling Paint,4433,248,0,80,0,40,40,80,249.352869,0,249.352869,,,,2015-08-10 08:00,2015-08-19 16:00,,2015-07-10 08:00,2015-07-19 16:00,2015-07-10 08:00,2015-07-19 16:00,2015-07-10 08:00,2015-07-19 16:00,2015-08-10 08:00,2015-08-19 16:00,,PT_Normal,,,,,QfF9rwNZH0WYoqVAbGM5Mg,RcrEv/nzSiiuejHUzCUuwQ,,,N,0,0,,,2014-04-05 12:28,2014-04-05 13:21,admin,admin,
3104,142847,1749,35685,642,0,N,N,N,CP_Drtn,TT_Task,DT_FixedDUR2,TK_NotStart,BL3-FN-4F-1040,Waterproofing,4433,528,0,40,0,7,7,40,136.282792,0,136.282792,,,,2015-09-24 08:00,2015-09-28 16:00,,2015-07-20 08:00,2015-07-24 16:00,2015-07-20 08:00,2015-07-24 16:00,2015-07-20 08:00,2015-07-24 16:00,2015-09-24 08:00,2015-09-28 16:00,,PT_Normal,,,,,Td8e8BoUfE68F44TzZvqCQ,0mCF8Wp9RLmOReqE7Cua7Q,,,N,0,0,,,2014-04-05 12:28,2014-04-05 13:21,admin,admin,
3105,142848,1749,35685,642,0,N,N,N,CP_Drtn,TT_Task,DT_FixedDUR2,TK_NotStart,BL3-FN-4F-1060,Flooring Works,4433,528,0,160,0,1379.7,1379.7,160,32172.316087,0,32172.316087,,,,2015-09-29 08:00,2015-10-18 16:00,,2015-07-25 08:00,2015-08-13 16:00,2015-07-25 08:00,2015-08-13 16:00,2015-07-25 08:00,2015-08-13 16:00,2015-09-29 08:00,2015-10-18 16:00,,PT_Normal,,,,,XNsQJ7rZZ0KrFy7GCpgWRw,XIr6uxoxRqGoEO1ZerWEaw,,,N,0,0,,,2014-04-05 12:28,2014-04-05 13:21,admin,admin,
3106,142849,1749,35685,642,0,N,N,N,CP_Drtn,TT_Task,DT_FixedDUR2,TK_NotStart,BL3-FN-4F-1100,Final Paint,,208,0,80,0,0,0,80,10,0,10,,,,2016-01-26 08:00,2016-02-04 16:00,,2015-12-31 08:00,2016-01-09 16:00,2015-12-31 08:00,2016-01-09 16:00,2015-12-31 08:00,2016-01-09 16:00,2016-01-26 08:00,2016-02-04 16:00,,PT_Normal,,,,,jfW4O9MyU0aJgOo5Leh5eQ,ZJIjMj7AQOmaz3KPkWjZGA,,,N,0,0,,,2014-04-05 12:28,2014-04-05 13:21,admin,admin,
3107,142850,1749,35685,642,0,N,N,N,CP_Drtn,TT_Task,DT_FixedDUR2,TK_NotStart,BL3-FN-4F-1050,Wall Tiling,4433,248,0,80,0,1810,1810,80,8298,0,8298,,,,2015-08-20 08:00,2015-08-29 16:00,,2015-07-20 08:00,2015-07-29 16:00,2015-07-20 08:00,2015-07-29 16:00,2015-07-20 08:00,2015-07-29 16:00,2015-08-20 08:00,2015-08-29 16:00,,PT_Normal,,,,,V8HJT3pXh0aGMKu/cznNCQ,yu9f4sNITAmhV2mx0gFBhg,,,N,0,0,,,2014-04-05 12:28,2014-04-05 13:21,admin,admin,
3108,142851,1749,35685,642,0,N,N,N,CP_Drtn,TT_Task,DT_FixedDUR2,TK_NotStart,BL3-FN-4F-1070,False Ceiling,4433,248,0,120,0,6640,6640,120,56075,0,56075,,,,2015-08-30 08:00,2015-09-13 16:00,,2015-07-30 08:00,2015-08-13 16:00,2015-07-30 08:00,2015-08-13 16:00,2015-07-30 08:00,2015-08-13 16:00,2015-08-30 08:00,2015-09-13 16:00,,PT_Normal,,,,,G9YRlC72ok2yPIt7SUGhFA,wKW5YDOOSYGSXRErExhjjA,,,N,0,0,,,2014-04-05 12:28,2014-04-05 13:21,admin,admin,
3109,142852,1749,35685,642,0,N,N,N,CP_Drtn,TT_Task,DT_FixedDUR2,TK_NotStart,BL3-FN-4F-1080,Hand Rails for Stairs,4433,248,0,120,0,43,43,120,9498.792932,0,9498.792932,,,,2015-09-14 08:00,2015-09-28 16:00,,2015-08-14 08:00,2015-08-28 16:00,2015-08-14 08:00,2015-08-28 16:00,2015-08-14 08:00,2015-08-28 16:00,2015-09-14 08:00,2015-09-28 16:00,,PT_Normal,,,,,SdmOhjpo0UCizuPCfVPTtw,HkaMeQgzSCmu2PHWYPa6Dw,,,N,0,0,,,2014-04-05 12:28,2014-04-05 13:21,admin,admin,
3110,142853,1749,35685,642,0,N,N,N,CP_Drtn,TT_Task,DT_FixedDUR2,TK_NotStart,BL3-FN-4F-1090,Doors Installation,,248,0,120,0,0,0,120,22006.109373,0,22006.109373,,,,2015-09-29 08:00,2015-10-13 16:00,,2015-08-29 08:00,2015-09-12 16:00,2015-08-29 08:00,2015-09-12 16:00,2015-08-29 08:00,2015-09-12 16:00,2015-09-29 08:00,2015-10-13 16:00,,PT_Normal,,,,,q0rPZForWU6TwcxjoyCfXw,hjrB8qQvRS60Rf6xXI7dNQ,,,N,0,0,,,2014-04-05 12:28,2014-04-05 13:21,admin,admin,
3111,142854,1749,35707,642,0,N,N,N,CP_Drtn,TT_Task,DT_FixedDUR2,TK_NotStart,BL3-ST-5F-1000,Reinforcement for Verticals,4433,0,0,40,0,842.201246,842.201246,40,56313.208727,0,56313.208727,,,,2015-04-04 08:00,2015-04-08 16:00,,2015-04-04 08:00,2015-04-08 16:00,2015-04-04 08:00,2015-04-08 16:00,2015-04-04 08:00,2015-04-08 16:00,2015-04-04 08:00,2015-04-08 16:00,,PT_Normal,,,,,TckHQluOq0aZv9bBFUtomA,9AH4hdPUTv+6D3sMYJygsA,,,Y,0,0,,,2014-04-05 12:28,2014-04-05 13:21,admin,admin,
3112,142855,1749,35707,642,0,N,N,N,CP_Drtn,TT_Task,DT_FixedDUR2,TK_NotStart,BL3-ST-5F-1020,FW for Verticals,4433,0,0,40,0,9250.408023,9250.408023,40,40673.84,0,40673.84,,,,2015-04-09 08:00,2015-04-14 16:00,,2015-04-09 08:00,2015-04-14 16:00,2015-04-09 08:00,2015-04-14 16:00,2015-04-09 08:00,2015-04-14 16:00,2015-04-09 08:00,2015-04-14 16:00,,PT_Normal,,,,,knRlVqOWxkmpJvCzD9I6lA,HCdLUCYQTvqlT3ZIagYIZQ,,,Y,0,0,,,2014-04-05 12:28,2014-04-05 13:21,admin,admin,
3113,142856,1749,35707,642,0,N,N,N,CP_Drtn,TT_Task,DT_FixedDUR2,TK_NotStart,BL3-ST-5F-1030,Concrete Verticals,4433,0,0,8,0,2003.265215,2003.265215,8,33908.0695,0,33908.0695,,,,2015-04-15 08:00,2015-04-15 16:00,,2015-04-15 08:00,2015-04-15 16:00,2015-04-15 08:00,2015-04-15 16:00,2015-04-15 08:00,2015-04-15 16:00,2015-04-15 08:00,2015-04-15 16:00,,PT_Normal,,,,,VN88zIq55EW/nMww691rEA,6ssg7nhHQceGxTq5Wz2NMQ,,,Y,0,0,,,2014-04-05 12:28,2014-04-05 13:21,admin,admin,
3114,142857,1749,35707,642,0,N,N,N,CP_Drtn,TT_Task,DT_FixedDUR2,TK_NotStart,BL3-ST-5F-1040,FW for Slab,4433,0,0,40,0,16202.380057,16202.380057,40,71237.75,0,71237.75,,,,2015-04-16 08:00,2015-04-21 16:00,,2015-04-16 08:00,2015-04-21 16:00,2015-04-16 08:00,2015-04-21 16:00,2015-04-16 08:00,2015-04-21 16:00,2015-04-16 08:00,2015-04-21 16:00,,PT_Normal,,,,,+YgIZJbfik2ax5bg/q1/Pw,c3D684agTD6aPdPQKPxuLA,,,Y,0,0,,,2014-04-05 12:28,2014-04-05 13:21,admin,admin,
3115,142858,1749,35707,642,0,N,N,N,CP_Drtn,TT_Task,DT_FixedDUR2,TK_NotStart,BL3-ST-5F-1050,Reinforcement for Slab,4433,0,0,40,0,1629.170164,1629.170164,40,108928.6736,0,108928.6736,,,,2015-04-22 08:00,2015-04-27 16:00,,2015-04-22 08:00,2015-04-27 16:00,2015-04-22 08:00,2015-04-27 16:00,2015-04-22 08:00,2015-04-27 16:00,2015-04-22 08:00,2015-04-27 16:00,,PT_Normal,,,,,f+TU96ey1k68z1bhlfF0/A,D2qA5weEQsuDV56UVQKHAQ,,,Y,0,0,,,2014-04-05 12:28,2014-04-05 13:21,admin,admin,
3116,142859,1749,35707,642,0,N,N,N,CP_Drtn,TT_Task,DT_FixedDUR2,TK_NotStart,BL3-ST-5F-1070,Concrete for Slab,4433,0,0,8,0,4319.680781,4319.680781,8,73115.491,0,73115.491,,,,2015-04-28 08:00,2015-04-28 16:00,,2015-04-28 08:00,2015-04-28 16:00,2015-04-28 08:00,2015-04-28 16:00,2015-04-28 08:00,2015-04-28 16:00,2015-04-28 08:00,2015-04-28 16:00,,PT_Normal,,,,,cYcvSdH9h0akPqhtdi2EWg,Ws4x6GecQ5K8rovuV3qaIg,,,Y,0,0,,,2014-04-05 12:28,2014-04-05 13:21,admin,admin,
3117,142860,1749,35707,642,0,N,N,N,CP_Drtn,TT_Task,DT_FixedDUR2,TK_NotStart,BL3-ST-5F-1010,MEP Works in Vertical Element,,40,40,40,0,160,160,40,1803.546829,0,1803.546829,,,,2015-04-09 08:00,2015-04-14 16:00,,2015-04-04 08:00,2015-04-08 16:00,2015-04-04 08:00,2015-04-08 16:00,2015-04-04 08:00,2015-04-08 16:00,2015-04-09 08:00,2015-04-14 16:00,,PT_Normal,,,,,t4G3DFBCXEmsHjN1jER2aw,SBBl1DcsRCCRezFgKX2wXg,,,N,0,0,,,2014-04-05 12:28,2014-04-05 13:21,admin,admin,
3118,142861,1749,35707,642,0,N,N,N,CP_Drtn,TT_Task,DT_FixedDUR2,TK_NotStart,BL3-ST-5F-1060,MEP Works in Slab & Beams,,0,0,40,0,320,320,40,3354.018234,0,3354.018234,,,,2015-04-22 08:00,2015-04-27 16:00,,2015-04-22 08:00,2015-04-27 16:00,2015-04-22 08:00,2015-04-27 16:00,2015-04-22 08:00,2015-04-27 16:00,2015-04-22 08:00,2015-04-27 16:00,,PT_Normal,,,,,d0yON73h5kaccs4R1VnaGA,els0qqlCSgGOFKgpX9y3ZQ,,,Y,0,0,,,2014-04-05 12:28,2014-04-05 13:21,admin,admin,
3119,142862,1749,35801,642,0,N,N,N,CP_Drtn,TT_Task,DT_FixedDUR2,TK_NotStart,BL3-FN-5F-1000,Block Works,4433,72,0,160,0,1746.48,1746.48,160,23239.034752,0,23239.034752,,,,2015-06-26 08:00,2015-07-15 16:00,,2015-06-17 08:00,2015-07-06 16:00,2015-06-17 08:00,2015-07-06 16:00,2015-06-17 08:00,2015-07-06 16:00,2015-06-26 08:00,2015-07-15 16:00,,PT_Normal,,,,,++KZTY02oUyHZPBXg5f5jQ,o9J/j9C0Rja74etVCZuA+g,,,N,0,0,,,2014-04-05 12:28,2014-04-05 13:21,admin,admin,
3120,142863,1749,35801,642,0,N,N,N,CP_Drtn,TT_Task,DT_FixedDUR2,TK_NotStart,BL3-FN-5F-1010,Plaster,4433,136,0,144,0,2773.5,2773.5,144,32615.3092,0,32615.3092,,,,2015-07-24 08:00,2015-08-10 16:00,,2015-07-07 08:00,2015-07-24 16:00,2015-07-07 08:00,2015-07-24 16:00,2015-07-07 08:00,2015-07-24 16:00,2015-07-24 08:00,2015-08-10 16:00,,PT_Normal,,,,,zO4l2yxLfUOBxncZaoVeAQ,+AWizPkSR6Oamsql4nC9hw,,,N,0,0,,,2014-04-05 12:28,2014-04-05 13:21,admin,admin,
3121,142864,1749,35801,642,0,N,N,N,CP_Drtn,TT_Task,DT_FixedDUR2,TK_NotStart,BL3-FN-5F-1020,Paint 1st Coat,4433,168,0,120,0,832,832,120,5032.378071,0,5032.378071,,,,2015-08-15 08:00,2015-08-29 16:00,,2015-07-25 08:00,2015-08-08 16:00,2015-07-25 08:00,2015-08-08 16:00,2015-07-25 08:00,2015-08-08 16:00,2015-08-15 08:00,2015-08-29 16:00,,PT_Normal,,,,,UcHyHINZCU6qfsTXB1Ummg,arj+/2aCRViUcf91td9ipA,,,N,0,0,,,2014-04-05 12:28,2014-04-05 13:21,admin,admin,
3122,142865,1749,35801,642,0,N,N,N,CP_Drtn,TT_Task,DT_FixedDUR2,TK_NotStart,BL3-FN-5F-1030,Ceiling Paint,4433,168,0,80,0,40,40,80,249.352869,0,249.352869,,,,2015-08-25 08:00,2015-09-03 16:00,,2015-08-04 08:00,2015-08-13 16:00,2015-08-04 08:00,2015-08-13 16:00,2015-08-04 08:00,2015-08-13 16:00,2015-08-25 08:00,2015-09-03 16:00,,PT_Normal,,,,,UKXvqbzINUK0P5dT/L0aOg,7D8xvUmuQ/+5oFerB6J3Wg,,,N,0,0,,,2014-04-05 12:28,2014-04-05 13:21,admin,admin,
3123,142866,1749,35801,642,0,N,N,N,CP_Drtn,TT_Task,DT_FixedDUR2,TK_NotStart,BL3-FN-5F-1040,Waterproofing,4433,440,0,40,0,7,7,40,136.282792,0,136.282792,,,,2015-10-08 08:00,2015-10-12 16:00,,2015-08-14 08:00,2015-08-18 16:00,2015-08-14 08:00,2015-08-18 16:00,2015-08-14 08:00,2015-08-18 16:00,2015-10-08 08:00,2015-10-12 16:00,,PT_Normal,,,,,MMv1E48JRE+C8clzdu1a4g,rrCEYQPdQH+AKIOeyUZbjQ,,,N,0,0,,,2014-04-05 12:28,2014-04-05 13:21,admin,admin,
3124,142867,1749,35801,642,0,N,N,N,CP_Drtn,TT_Task,DT_FixedDUR2,TK_NotStart,BL3-FN-5F-1060,Flooring Works,4433,440,0,160,0,1379.7,1379.7,160,32172.316087,0,32172.316087,,,,2015-10-13 08:00,2015-11-01 16:00,,2015-08-19 08:00,2015-09-07 16:00,2015-08-19 08:00,2015-09-07 16:00,2015-08-19 08:00,2015-09-07 16:00,2015-10-13 08:00,2015-11-01 16:00,,PT_Normal,,,,,5L5J/4mkXU+Lb9YvJdQdoQ,ZFYg4LN4S5Knn4TwY9kQpA,,,N,0,0,,,2014-04-05 12:28,2014-04-05 13:21,admin,admin,
3125,142868,1749,35801,642,0,N,N,N,CP_Drtn,TT_Task,DT_FixedDUR2,TK_NotStart,BL3-FN-5F-1100,Final Paint,,176,0,80,0,0,0,80,10,0,10,,,,2016-01-28 08:00,2016-02-06 16:00,,2016-01-06 08:00,2016-01-15 16:00,2016-01-06 08:00,2016-01-15 16:00,2016-01-06 08:00,2016-01-15 16:00,2016-01-28 08:00,2016-02-06 16:00,,PT_Normal,,,,,VbHJ0Mmyikqcai+wa+uvWw,0Yg+zjfWTzSYb00ZQdTVlg,,,N,0,0,,,2014-04-05 12:28,2014-04-05 13:21,admin,admin,
3126,142869,1749,35801,642,0,N,N,N,CP_Drtn,TT_Task,DT_FixedDUR2,TK_NotStart,BL3-FN-5F-1050,Wall Tiling,4433,168,0,80,0,1810,1810,80,8154,0,8154,,,,2015-09-04 08:00,2015-09-13 16:00,,2015-08-14 08:00,2015-08-23 16:00,2015-08-14 08:00,2015-08-23 16:00,2015-08-14 08:00,2015-08-23 16:00,2015-09-04 08:00,2015-09-13 16:00,,PT_Normal,,,,,dCT7zmhyzUaQtDzbEk2KRg,kLfOEjmOTY2/Sj11sS1MvQ,,,N,0,0,,,2014-04-05 12:28,2014-04-05 13:21,admin,admin,
3127,142870,1749,35801,642,0,N,N,N,CP_Drtn,TT_Task,DT_FixedDUR2,TK_NotStart,BL3-FN-5F-1070,False Ceiling,4433,168,0,120,0,7320,7320,120,63045,0,63045,,,,2015-09-14 08:00,2015-09-28 16:00,,2015-08-24 08:00,2015-09-07 16:00,2015-08-24 08:00,2015-09-07 16:00,2015-08-24 08:00,2015-09-07 16:00,2015-09-14 08:00,2015-09-28 16:00,,PT_Normal,,,,,L5f8NpGxh0a3X9/TEE5o8w,tND7mpySR7erdXvfVfPXoA,,,N,0,0,,,2014-04-05 12:28,2014-04-05 13:21,admin,admin,
3128,142871,1749,35801,642,0,N,N,N,CP_Drtn,TT_Task,DT_FixedDUR2,TK_NotStart,BL3-FN-5F-1080,Hand Rails for Stairs,4433,168,0,120,0,43,43,120,9498.792932,0,9498.792932,,,,2015-09-29 08:00,2015-10-13 16:00,,2015-09-08 08:00,2015-09-22 16:00,2015-09-08 08:00,2015-09-22 16:00,2015-09-08 08:00,2015-09-22 16:00,2015-09-29 08:00,2015-10-13 16:00,,PT_Normal,,,,,AcxNBdtT9EGHErl9lmYOdA,9dvgxm7wRi6xTS3W7Pfl9A,,,N,0,0,,,2014-04-05 12:28,2014-04-05 13:21,admin,admin,
3129,142872,1749,35801,642,0,N,N,N,CP_Drtn,TT_Task,DT_FixedDUR2,TK_NotStart,BL3-FN-5F-1090,Doors Installation,,168,0,120,0,0,0,120,22006.109373,0,22006.109373,,,,2015-10-14 08:00,2015-10-28 16:00,,2015-09-23 08:00,2015-10-07 16:00,2015-09-23 08:00,2015-10-07 16:00,2015-09-23 08:00,2015-10-07 16:00,2015-10-14 08:00,2015-10-28 16:00,,PT_Normal,,,,,3JIspcIc70CpeZkKrxrwtQ,xxlqa67pTuCUJLPcfy4Dog,,,N,0,0,,,2014-04-05 12:28,2014-04-05 13:21,admin,admin,
3130,142873,1749,35833,642,0,N,N,N,CP_Drtn,TT_Task,DT_FixedDUR2,TK_NotStart,BL3-ST-6F-1000,Reinforcement for Verticals,4433,0,0,40,0,842.201246,842.201246,40,56313.208727,0,56313.208727,,,,2015-04-29 08:00,2015-05-04 16:00,,2015-04-29 08:00,2015-05-04 16:00,2015-04-29 08:00,2015-05-04 16:00,2015-04-29 08:00,2015-05-04 16:00,2015-04-29 08:00,2015-05-04 16:00,,PT_Normal,,,,,CFev+Gq4tEOHwkigG4N7Bg,C0e/7FNARnCTWy7Yxi8GtA,,,Y,0,0,,,2014-04-05 12:28,2014-04-05 13:21,admin,admin,
3131,142874,1749,35833,642,0,N,N,N,CP_Drtn,TT_Task,DT_FixedDUR2,TK_NotStart,BL3-ST-6F-1020,FW for Verticals,4433,0,0,40,0,9250.408023,9250.408023,40,40673.84,0,40673.84,,,,2015-05-05 08:00,2015-05-10 16:00,,2015-05-05 08:00,2015-05-10 16:00,2015-05-05 08:00,2015-05-10 16:00,2015-05-05 08:00,2015-05-10 16:00,2015-05-05 08:00,2015-05-10 16:00,,PT_Normal,,,,,IxUaQAKYlEKsMK+WRIazBQ,PZmE0EsWSDO3pt4t1EmqqQ,,,Y,0,0,,,2014-04-05 12:28,2014-04-05 13:21,admin,admin,
3132,142875,1749,35833,642,0,N,N,N,CP_Drtn,TT_Task,DT_FixedDUR2,TK_NotStart,BL3-ST-6F-1030,Concrete Verticals,4433,0,0,8,0,2003.265215,2003.265215,8,33908.0695,0,33908.0695,,,,2015-05-11 08:00,2015-05-11 16:00,,2015-05-11 08:00,2015-05-11 16:00,2015-05-11 08:00,2015-05-11 16:00,2015-05-11 08:00,2015-05-11 16:00,2015-05-11 08:00,2015-05-11 16:00,,PT_Normal,,,,,a/P+kdO6qkCSZATGWxRXEA,kXgZ+/2oT2i8aRDAASQMMA,,,Y,0,0,,,2014-04-05 12:28,2014-04-05 13:21,admin,admin,
3133,142876,1749,35833,642,0,N,N,N,CP_Drtn,TT_Task,DT_FixedDUR2,TK_NotStart,BL3-ST-6F-1040,FW for Slab,4433,0,0,40,0,16202.380057,16202.380057,40,71237.75,0,71237.75,,,,2015-05-12 08:00,2015-05-17 16:00,,2015-05-12 08:00,2015-05-17 16:00,2015-05-12 08:00,2015-05-17 16:00,2015-05-12 08:00,2015-05-17 16:00,2015-05-12 08:00,2015-05-17 16:00,,PT_Normal,,,,,97P0EGybq0OhumOD+KZYtw,qc9MmgR1T6eNnxExzAWwXQ,,,Y,0,0,,,2014-04-05 12:28,2014-04-05 13:21,admin,admin,
3134,142877,1749,35833,642,0,N,N,N,CP_Drtn,TT_Task,DT_FixedDUR2,TK_NotStart,BL3-ST-6F-1050,Reinforcement for Slab,4433,0,0,40,0,1629.170164,1629.170164,40,108928.6736,0,108928.6736,,,,2015-05-18 08:00,2015-05-23 16:00,,2015-05-18 08:00,2015-05-23 16:00,2015-05-18 08:00,2015-05-23 16:00,2015-05-18 08:00,2015-05-23 16:00,2015-05-18 08:00,2015-05-23 16:00,,PT_Normal,,,,,hD588hU770qufjbOkW5nkw,H/CHFwAaSTSPMLU+qQCrIA,,,Y,0,0,,,2014-04-05 12:28,2014-04-05 13:21,admin,admin,
3135,142878,1749,35833,642,0,N,N,N,CP_Drtn,TT_Task,DT_FixedDUR2,TK_NotStart,BL3-ST-6F-1070,Concrete for Slab,4433,0,0,8,0,4319.680781,4319.680781,8,73115.491,0,73115.491,,,,2015-05-24 08:00,2015-05-24 16:00,,2015-05-24 08:00,2015-05-24 16:00,2015-05-24 08:00,2015-05-24 16:00,2015-05-24 08:00,2015-05-24 16:00,2015-05-24 08:00,2015-05-24 16:00,,PT_Normal,,,,,QTIPEuxhPkCxeZ611AGS+Q,Sz+zHPxCQy2oV5IwcEQqfg,,,Y,0,0,,,2014-04-05 12:28,2014-04-05 13:21,admin,admin,
3136,142879,1749,35833,642,0,N,N,N,CP_Drtn,TT_Task,DT_FixedDUR2,TK_NotStart,BL3-ST-6F-1010,MEP Works in Vertical Element,,40,40,40,0,160,160,40,1803.546829,0,1803.546829,,,,2015-05-05 08:00,2015-05-10 16:00,,2015-04-29 08:00,2015-05-04 16:00,2015-04-29 08:00,2015-05-04 16:00,2015-04-29 08:00,2015-05-04 16:00,2015-05-05 08:00,2015-05-10 16:00,,PT_Normal,,,,,vC7DQDldR02YZVguV+xR0g,P7HgFoi0T/K6z0zJyqdEgg,,,N,0,0,,,2014-04-05 12:28,2014-04-05 13:21,admin,admin,
3137,142880,1749,35833,642,0,N,N,N,CP_Drtn,TT_Task,DT_FixedDUR2,TK_NotStart,BL3-ST-6F-1060,MEP Works in Slab & Beams,,0,0,40,0,320,320,40,3354.018234,0,3354.018234,,,,2015-05-18 08:00,2015-05-23 16:00,,2015-05-18 08:00,2015-05-23 16:00,2015-05-18 08:00,2015-05-23 16:00,2015-05-18 08:00,2015-05-23 16:00,2015-05-18 08:00,2015-05-23 16:00,,PT_Normal,,,,,3yljfO3vKUKxrvfvmCyplA,/ewqxbsPR+WbdqHbyvrZiw,,,Y,0,0,,,2014-04-05 12:28,2014-04-05 13:21,admin,admin,
3138,142881,1749,35723,642,0,N,N,N,CP_Drtn,TT_Task,DT_FixedDUR2,TK_NotStart,BL3-FN-6F-1000,Block Works,4433,72,0,160,0,1746.48,1746.48,160,23239.034752,0,23239.034752,,,,2015-07-18 08:00,2015-08-06 16:00,,2015-07-09 08:00,2015-07-28 16:00,2015-07-09 08:00,2015-07-28 16:00,2015-07-09 08:00,2015-07-28 16:00,2015-07-18 08:00,2015-08-06 16:00,,PT_Normal,,,,,vz5GV88N60qPUCJ0pxR5UQ,L4aWK+ouSvy14M3rM+zS6w,,,N,0,0,,,2014-04-05 12:28,2014-04-05 13:21,admin,admin,
3139,142882,1749,35723,642,0,N,N,N,CP_Drtn,TT_Task,DT_FixedDUR2,TK_NotStart,BL3-FN-6F-1010,Plaster,4433,104,0,144,0,2773.5,2773.5,144,32615.3092,0,32615.3092,,,,2015-08-11 08:00,2015-08-28 16:00,,2015-07-29 08:00,2015-08-15 16:00,2015-07-29 08:00,2015-08-15 16:00,2015-07-29 08:00,2015-08-15 16:00,2015-08-11 08:00,2015-08-28 16:00,,PT_Normal,,,,,qmfnw9Htt028O7e8vROWYw,eApkhDWXRKuS+mcJIR0Dmg,,,N,0,0,,,2014-04-05 12:28,2014-04-05 13:21,admin,admin,
3140,142883,1749,35723,642,0,N,N,N,CP_Drtn,TT_Task,DT_FixedDUR2,TK_NotStart,BL3-FN-6F-1020,Paint 1st Coat,4433,112,0,120,0,832,832,120,5032.378071,0,5032.378071,,,,2015-08-30 08:00,2015-09-13 16:00,,2015-08-16 08:00,2015-08-30 16:00,2015-08-16 08:00,2015-08-30 16:00,2015-08-16 08:00,2015-08-30 16:00,2015-08-30 08:00,2015-09-13 16:00,,PT_Normal,,,,,RpX8wD8ZtU6t+bgzePwJCA,U017AKhaSo+E8pXZiqP+Cw,,,N,0,0,,,2014-04-05 12:28,2014-04-05 13:21,admin,admin,
3141,142884,1749,35723,642,0,N,N,N,CP_Drtn,TT_Task,DT_FixedDUR2,TK_NotStart,BL3-FN-6F-1030,Ceiling Paint,4433,112,0,80,0,40,40,80,249.352869,0,249.352869,,,,2015-09-09 08:00,2015-09-18 16:00,,2015-08-26 08:00,2015-09-04 16:00,2015-08-26 08:00,2015-09-04 16:00,2015-08-26 08:00,2015-09-04 16:00,2015-09-09 08:00,2015-09-18 16:00,,PT_Normal,,,,,FujezbzZS0KsHcQYVFxhcA,u0PgOUUERQuuCL3GKLEQqw,,,N,0,0,,,2014-04-05 12:28,2014-04-05 13:21,admin,admin,
3142,142885,1749,35723,642,0,N,N,N,CP_Drtn,TT_Task,DT_FixedDUR2,TK_NotStart,BL3-FN-6F-1040,Waterproofing,4433,376,0,40,0,7,7,40,136.282792,0,136.282792,,,,2015-10-22 08:00,2015-10-26 16:00,,2015-09-05 08:00,2015-09-09 16:00,2015-09-05 08:00,2015-09-09 16:00,2015-09-05 08:00,2015-09-09 16:00,2015-10-22 08:00,2015-10-26 16:00,,PT_Normal,,,,,eWtthwwAqEip9LfmqgP0ng,aIXc8qgfQ3WlEN7Laog/Vg,,,N,0,0,,,2014-04-05 12:28,2014-04-05 13:21,admin,admin,
3143,142886,1749,35723,642,0,N,N,N,CP_Drtn,TT_Task,DT_FixedDUR2,TK_NotStart,BL3-FN-6F-1060,Flooring Works,4433,376,0,160,0,1379.7,1379.7,160,32172.316087,0,32172.316087,,,,2015-10-27 08:00,2015-11-15 16:00,,2015-09-10 08:00,2015-09-29 16:00,2015-09-10 08:00,2015-09-29 16:00,2015-09-10 08:00,2015-09-29 16:00,2015-10-27 08:00,2015-11-15 16:00,,PT_Normal,,,,,mtV6LkO6IUWldquJqjd8hA,3xjp5gEBSWK0styyb3haGQ,,,N,0,0,,,2014-04-05 12:28,2014-04-05 13:21,admin,admin,
3144,142887,1749,35723,642,0,N,N,N,CP_Drtn,TT_Task,DT_FixedDUR2,TK_NotStart,BL3-FN-6F-1100,Final Paint,,144,0,80,0,0,0,80,10,0,10,,,,2016-01-30 08:00,2016-02-08 16:00,,2016-01-12 08:00,2016-01-21 16:00,2016-01-12 08:00,2016-01-21 16:00,2016-01-12 08:00,2016-01-21 16:00,2016-01-30 08:00,2016-02-08 16:00,,PT_Normal,,,,,zkk61xhsKkGuA5uALg27MQ,a80wHOQfQMCfHtyfsIRZog,,,N,0,0,,,2014-04-05 12:28,2014-04-05 13:21,admin,admin,
3145,142888,1749,35723,642,0,N,N,N,CP_Drtn,TT_Task,DT_FixedDUR2,TK_NotStart,BL3-FN-6F-1050,Wall Tiling,4433,112,0,80,0,1810,1810,80,8154,0,8154,,,,2015-09-19 08:00,2015-09-28 16:00,,2015-09-05 08:00,2015-09-14 16:00,2015-09-05 08:00,2015-09-14 16:00,2015-09-05 08:00,2015-09-14 16:00,2015-09-19 08:00,2015-09-28 16:00,,PT_Normal,,,,,kdvwi0AaCkinI2cSfbjDZA,KqHk6bHNR/CdGO51ZbnLbQ,,,N,0,0,,,2014-04-05 12:28,2014-04-05 13:21,admin,admin,
3146,142889,1749,35723,642,0,N,N,N,CP_Drtn,TT_Task,DT_FixedDUR2,TK_NotStart,BL3-FN-6F-1070,False Ceiling,4433,112,0,120,0,7320,7320,120,63045,0,63045,,,,2015-09-29 08:00,2015-10-13 16:00,,2015-09-15 08:00,2015-09-29 16:00,2015-09-15 08:00,2015-09-29 16:00,2015-09-15 08:00,2015-09-29 16:00,2015-09-29 08:00,2015-10-13 16:00,,PT_Normal,,,,,SaQdW0n+0E2JLcd5DV53PQ,nLrXwnL5Ruiw9OsanFwdQA,,,N,0,0,,,2014-04-05 12:28,2014-04-05 13:21,admin,admin,
3147,142890,1749,35723,642,0,N,N,N,CP_Drtn,TT_Task,DT_FixedDUR2,TK_NotStart,BL3-FN-6F-1080,Hand Rails for Stairs,4433,112,0,120,0,43,43,120,9498.792932,0,9498.792932,,,,2015-10-14 08:00,2015-10-28 16:00,,2015-09-30 08:00,2015-10-14 16:00,2015-09-30 08:00,2015-10-14 16:00,2015-09-30 08:00,2015-10-14 16:00,2015-10-14 08:00,2015-10-28 16:00,,PT_Normal,,,,,Jfmcp1KG5ESb2TMjk0MC+g,gYRTDQ2BSGaBm+jYtzJFvg,,,N,0,0,,,2014-04-05 12:28,2014-04-05 13:21,admin,admin,
3148,142891,1749,35723,642,0,N,N,N,CP_Drtn,TT_Task,DT_FixedDUR2,TK_NotStart,BL3-FN-6F-1090,Doors Installation,,112,0,120,0,0,0,120,22006.109373,0,22006.109373,,,,2015-10-29 08:00,2015-11-12 16:00,,2015-10-15 08:00,2015-10-29 16:00,2015-10-15 08:00,2015-10-29 16:00,2015-10-15 08:00,2015-10-29 16:00,2015-10-29 08:00,2015-11-12 16:00,,PT_Normal,,,,,udfFXADLfki5X+Avl88IEw,b9lO/v2KTrmUyu0nVWqPJA,,,N,0,0,,,2014-04-05 12:28,2014-04-05 13:21,admin,admin,
3149,142892,1749,35773,642,0,N,N,N,CP_Drtn,TT_Task,DT_FixedDUR2,TK_NotStart,BL3-ST-7F-1000,Reinforcement for Verticals,4433,0,0,40,0,842.201246,842.201246,40,56313.208727,0,56313.208727,,,,2015-05-25 08:00,2015-05-30 16:00,,2015-05-25 08:00,2015-05-30 16:00,2015-05-25 08:00,2015-05-30 16:00,2015-05-25 08:00,2015-05-30 16:00,2015-05-25 08:00,2015-05-30 16:00,,PT_Normal,,,,,3t4LNYPwyk2t/tFXQWjOug,XNzpCRy/SHCQHphUxo0Ruw,,,Y,0,0,,,2014-04-05 12:28,2014-04-05 13:21,admin,admin,
3150,142893,1749,35773,642,0,N,N,N,CP_Drtn,TT_Task,DT_FixedDUR2,TK_NotStart,BL3-ST-7F-1020,FW for Verticals,4433,0,0,40,0,9250.408023,9250.408023,40,40673.84,0,40673.84,,,,2015-05-31 08:00,2015-06-04 16:00,,2015-05-31 08:00,2015-06-04 16:00,2015-05-31 08:00,2015-06-04 16:00,2015-05-31 08:00,2015-06-04 16:00,2015-05-31 08:00,2015-06-04 16:00,,PT_Normal,,,,,ahOvU7CqSEycUQd1fnuz/A,XbUrqG2DSmmgrXL99IRFRg,,,Y,0,0,,,2014-04-05 12:28,2014-04-05 13:21,admin,admin,
3151,142894,1749,35773,642,0,N,N,N,CP_Drtn,TT_Task,DT_FixedDUR2,TK_NotStart,BL3-ST-7F-1030,Concrete Verticals,4433,0,0,8,0,2003.265215,2003.265215,8,33908.0695,0,33908.0695,,,,2015-06-05 08:00,2015-06-05 16:00,,2015-06-05 08:00,2015-06-05 16:00,2015-06-05 08:00,2015-06-05 16:00,2015-06-05 08:00,2015-06-05 16:00,2015-06-05 08:00,2015-06-05 16:00,,PT_Normal,,,,,KXJDxjQPyUGGKWT5JVGQ6w,IuwM1tXHTZ+uHX/x4h2LCw,,,Y,0,0,,,2014-04-05 12:28,2014-04-05 13:21,admin,admin,
3152,142895,1749,35773,642,0,N,N,N,CP_Drtn,TT_Task,DT_FixedDUR2,TK_NotStart,BL3-ST-7F-1040,FW for Slab,4433,0,0,40,0,16202.380057,16202.380057,40,71237.75,0,71237.75,,,,2015-06-06 08:00,2015-06-10 16:00,,2015-06-06 08:00,2015-06-10 16:00,2015-06-06 08:00,2015-06-10 16:00,2015-06-06 08:00,2015-06-10 16:00,2015-06-06 08:00,2015-06-10 16:00,,PT_Normal,,,,,7icfin4NpkqQ8ASe+azuUQ,AWELy3moTzOmRxh4dZc7Gg,,,Y,0,0,,,2014-04-05 12:28,2014-04-05 13:21,admin,admin,
3153,142896,1749,35773,642,0,N,N,N,CP_Drtn,TT_Task,DT_FixedDUR2,TK_NotStart,BL3-ST-7F-1050,Reinforcement for Slab,4433,0,0,40,0,1629.170164,1629.170164,40,108928.6736,0,108928.6736,,,,2015-06-11 08:00,2015-06-15 16:00,,2015-06-11 08:00,2015-06-15 16:00,2015-06-11 08:00,2015-06-15 16:00,2015-06-11 08:00,2015-06-15 16:00,2015-06-11 08:00,2015-06-15 16:00,,PT_Normal,,,,,i0ZaVH0FTESiTL+Ir0PsuQ,RgRJB539QpuNXpF+IWiM6Q,,,Y,0,0,,,2014-04-05 12:28,2014-04-05 13:21,admin,admin,
3154,142897,1749,35773,642,0,N,N,N,CP_Drtn,TT_Task,DT_FixedDUR2,TK_NotStart,BL3-ST-7F-1070,Concrete for Slab,4433,0,0,8,0,4319.680781,4319.680781,8,73115.491,0,73115.491,,,,2015-06-16 08:00,2015-06-16 16:00,,2015-06-16 08:00,2015-06-16 16:00,2015-06-16 08:00,2015-06-16 16:00,2015-06-16 08:00,2015-06-16 16:00,2015-06-16 08:00,2015-06-16 16:00,,PT_Normal,,,,,a0JvULKgiUe7lnDSNeNq7A,5b1qLVpCTMyeMfTC+ucAAA,,,Y,0,0,,,2014-04-05 12:28,2014-04-05 13:21,admin,admin,
3155,142898,1749,35773,642,0,N,N,N,CP_Drtn,TT_Task,DT_FixedDUR2,TK_NotStart,BL3-ST-7F-1010,MEP Works in Vertical Element,,40,40,40,0,160,160,40,1803.546829,0,1803.546829,,,,2015-05-31 08:00,2015-06-04 16:00,,2015-05-25 08:00,2015-05-30 16:00,2015-05-25 08:00,2015-05-30 16:00,2015-05-25 08:00,2015-05-30 16:00,2015-05-31 08:00,2015-06-04 16:00,,PT_Normal,,,,,Wy1mZxbF4UmCnA6P5KkP3w,avx9wjoTQrGwDYyLMYgy7Q,,,N,0,0,,,2014-04-05 12:28,2014-04-05 13:21,admin,admin,
3156,142899,1749,35773,642,0,N,N,N,CP_Drtn,TT_Task,DT_FixedDUR2,TK_NotStart,BL3-ST-7F-1060,MEP Works in Slab & Beams,,0,0,40,0,320,320,40,3354.018234,0,3354.018234,,,,2015-06-11 08:00,2015-06-15 16:00,,2015-06-11 08:00,2015-06-15 16:00,2015-06-11 08:00,2015-06-15 16:00,2015-06-11 08:00,2015-06-15 16:00,2015-06-11 08:00,2015-06-15 16:00,,PT_Normal,,,,,xRGzsc/qWEGVUzeZFSUvVw,nGGRaMbrR+OMp7nPiQhsxg,,,Y,0,0,,,2014-04-05 12:28,2014-04-05 13:21,admin,admin,
3157,142900,1749,35756,642,0,N,N,N,CP_Drtn,TT_Task,DT_FixedDUR2,TK_NotStart,BL3-FN-7F-1000,Block Works,4433,64,0,152,0,1746.48,1746.48,152,23238.034752,0,23238.034752,,,,2015-08-08 08:00,2015-08-26 16:00,,2015-07-31 08:00,2015-08-18 16:00,2015-07-31 08:00,2015-08-18 16:00,2015-07-31 08:00,2015-08-18 16:00,2015-08-08 08:00,2015-08-26 16:00,,PT_Normal,,,,,qeWa5In7uUiYTcqy9/gQ7g,Z+n6ByWARWaOC1mYEqVKjA,,,N,0,0,,,2014-04-05 12:28,2014-04-05 13:21,admin,admin,
3158,142901,1749,35756,642,0,N,N,N,CP_Drtn,TT_Task,DT_FixedDUR2,TK_NotStart,BL3-FN-7F-1010,Plaster,4433,64,0,128,0,2773.5,2773.5,128,32613.3092,0,32613.3092,,,,2015-08-27 08:00,2015-09-11 16:00,,2015-08-19 08:00,2015-09-03 16:00,2015-08-19 08:00,2015-09-03 16:00,2015-08-19 08:00,2015-09-03 16:00,2015-08-27 08:00,2015-09-11 16:00,,PT_Normal,,,,,GuIRrXvqSkyZ9Bzd/XV8+Q,WQ7+bZRSSMqt5M6twWNkTQ,,,N,0,0,,,2014-04-05 12:28,2014-04-05 13:21,admin,admin,
3159,142902,1749,35756,642,0,N,N,N,CP_Drtn,TT_Task,DT_FixedDUR2,TK_NotStart,BL3-FN-7F-1020,Paint 1st Coat,4433,64,0,120,0,832,832,120,5032.378071,0,5032.378071,,,,2015-09-14 08:00,2015-09-28 16:00,,2015-09-06 08:00,2015-09-20 16:00,2015-09-06 08:00,2015-09-20 16:00,2015-09-06 08:00,2015-09-20 16:00,2015-09-14 08:00,2015-09-28 16:00,,PT_Normal,,,,,AswQlf7SyE2wfIqmHqeC+w,/Pwsw2A8Ru+Ls/q5km65kQ,,,N,0,0,,,2014-04-05 12:28,2014-04-05 13:21,admin,admin,
3160,142903,1749,35756,642,0,N,N,N,CP_Drtn,TT_Task,DT_FixedDUR2,TK_NotStart,BL3-FN-7F-1030,Ceiling Paint,4433,64,0,80,0,40,40,80,249.352869,0,249.352869,,,,2015-09-24 08:00,2015-10-03 16:00,,2015-09-16 08:00,2015-09-25 16:00,2015-09-16 08:00,2015-09-25 16:00,2015-09-16 08:00,2015-09-25 16:00,2015-09-24 08:00,2015-10-03 16:00,,PT_Normal,,,,,oODrulPyWkaFtn/xaMNi4g,LtETrfldSEOPBb8TyDJpuA,,,N,0,0,,,2014-04-05 12:28,2014-04-05 13:21,admin,admin,
3161,142904,1749,35756,642,0,N,N,N,CP_Drtn,TT_Task,DT_FixedDUR2,TK_NotStart,BL3-FN-7F-1040,Waterproofing,4433,320,0,40,0,7,7,40,136.282792,0,136.282792,,,,2015-11-05 08:00,2015-11-09 16:00,,2015-09-26 08:00,2015-09-30 16:00,2015-09-26 08:00,2015-09-30 16:00,2015-09-26 08:00,2015-09-30 16:00,2015-11-05 08:00,2015-11-09 16:00,,PT_Normal,,,,,1eT7Do+2sEKOttDEHvupZA,cBiNa+vxSfCh53mbuXfNaQ,,,N,0,0,,,2014-04-05 12:28,2014-04-05 13:21,admin,admin,
3162,142905,1749,35756,642,0,N,N,N,CP_Drtn,TT_Task,DT_FixedDUR2,TK_NotStart,BL3-FN-7F-1060,Flooring Works,4433,320,0,160,0,1379.7,1379.7,160,32172.316087,0,32172.316087,,,,2015-11-10 08:00,2015-11-29 16:00,,2015-10-01 08:00,2015-10-20 16:00,2015-10-01 08:00,2015-10-20 16:00,2015-10-01 08:00,2015-10-20 16:00,2015-11-10 08:00,2015-11-29 16:00,,PT_Normal,,,,,S17vm/0t1EORUJHFkcBVqQ,49c9ImW+QzCr68qpa7YNbA,,,N,0,0,,,2014-04-05 12:28,2014-04-05 13:21,admin,admin,
3163,142906,1749,35756,642,0,N,N,N,CP_Drtn,TT_Task,DT_FixedDUR2,TK_NotStart,BL3-FN-7F-1100,Final Paint,,112,0,80,0,0,0,80,10,0,10,,,,2016-02-01 08:00,2016-02-10 16:00,,2016-01-18 08:00,2016-01-27 16:00,2016-01-18 08:00,2016-01-27 16:00,2016-01-18 08:00,2016-01-27 16:00,2016-02-01 08:00,2016-02-10 16:00,,PT_Normal,,,,,AkLGp7J1QUyatKeKX2z5Fg,F8UqF+CsR3+3IM5M/XSNEQ,,,N,0,0,,,2014-04-05 12:28,2014-04-05 13:21,admin,admin,
3164,142907,1749,35756,642,0,N,N,N,CP_Drtn,TT_Task,DT_FixedDUR2,TK_NotStart,BL3-FN-7F-1050,Wall Tiling,4433,64,0,80,0,1810,1810,80,8154,0,8154,,,,2015-10-04 08:00,2015-10-13 16:00,,2015-09-26 08:00,2015-10-05 16:00,2015-09-26 08:00,2015-10-05 16:00,2015-09-26 08:00,2015-10-05 16:00,2015-10-04 08:00,2015-10-13 16:00,,PT_Normal,,,,,32CG2dn0H06NQjB68tlDfg,madZ0GfMS/2eVflNb8ZEXg,,,N,0,0,,,2014-04-05 12:28,2014-04-05 13:21,admin,admin,
3165,142908,1749,35756,642,0,N,N,N,CP_Drtn,TT_Task,DT_FixedDUR2,TK_NotStart,BL3-FN-7F-1070,False Ceiling,4433,64,0,120,0,7320,7320,120,53045.434618,0,53045.434618,,,,2015-10-14 08:00,2015-10-28 16:00,,2015-10-06 08:00,2015-10-20 16:00,2015-10-06 08:00,2015-10-20 16:00,2015-10-06 08:00,2015-10-20 16:00,2015-10-14 08:00,2015-10-28 16:00,,PT_Normal,,,,,uq2ci/BiRkqYFsKPSTUgNA,ZPyyO53gRySW62bpiCJ1jA,,,N,0,0,,,2014-04-05 12:28,2014-04-05 13:21,admin,admin,
3166,142909,1749,35756,642,0,N,N,N,CP_Drtn,TT_Task,DT_FixedDUR2,TK_NotStart,BL3-FN-7F-1080,Hand Rails for Stairs,4433,64,0,120,0,43,43,120,9498.792932,0,9498.792932,,,,2015-10-29 08:00,2015-11-12 16:00,,2015-10-21 08:00,2015-11-04 16:00,2015-10-21 08:00,2015-11-04 16:00,2015-10-21 08:00,2015-11-04 16:00,2015-10-29 08:00,2015-11-12 16:00,,PT_Normal,,,,,nRzjVcp9vkOIr/TPuuT7Yw,zlD8D+18SluW5Q0SC2rKYQ,,,N,0,0,,,2014-04-05 12:28,2014-04-05 13:21,admin,admin,
3167,142910,1749,35756,642,0,N,N,N,CP_Drtn,TT_Task,DT_FixedDUR2,TK_NotStart,BL3-FN-7F-1090,Doors Installation,,64,0,120,0,0,0,120,22006.109373,0,22006.109373,,,,2015-11-13 08:00,2015-11-27 16:00,,2015-11-05 08:00,2015-11-19 16:00,2015-11-05 08:00,2015-11-19 16:00,2015-11-05 08:00,2015-11-19 16:00,2015-11-13 08:00,2015-11-27 16:00,,PT_Normal,,,,,zFHg8lQUhkaS3MN9TGvL5Q,UPt5AH0QQKqZ795DmPat+A,,,N,0,0,,,2014-04-05 12:28,2014-04-05 13:21,admin,admin,
3168,142911,1749,35885,642,0,N,N,N,CP_Drtn,TT_Task,DT_FixedDUR2,TK_NotStart,BL3-ST-8F-1000,Reinforcement for Verticals,4433,0,0,40,0,842.201246,842.201246,40,56313.208727,0,56313.208727,,,,2015-06-17 08:00,2015-06-21 16:00,,2015-06-17 08:00,2015-06-21 16:00,2015-06-17 08:00,2015-06-21 16:00,2015-06-17 08:00,2015-06-21 16:00,2015-06-17 08:00,2015-06-21 16:00,,PT_Normal,,,,,OPNub99ghEmBPko4Neq0LA,kX4rXBu2SFmI1WxwEtnOSA,,,Y,0,0,,,2014-04-05 12:28,2014-04-05 13:21,admin,admin,
3169,142912,1749,35885,642,0,N,N,N,CP_Drtn,TT_Task,DT_FixedDUR2,TK_NotStart,BL3-ST-8F-1020,FW for Verticals,4433,0,0,40,0,9250.408023,9250.408023,40,40673.84,0,40673.84,,,,2015-06-22 08:00,2015-06-26 16:00,,2015-06-22 08:00,2015-06-26 16:00,2015-06-22 08:00,2015-06-26 16:00,2015-06-22 08:00,2015-06-26 16:00,2015-06-22 08:00,2015-06-26 16:00,,PT_Normal,,,,,EyY8wg8h90OKz8HIVzJq7w,S8LUrWeqQTyytLX+yse8iA,,,Y,0,0,,,2014-04-05 12:28,2014-04-05 13:21,admin,admin,
3170,142913,1749,35885,642,0,N,N,N,CP_Drtn,TT_Task,DT_FixedDUR2,TK_NotStart,BL3-ST-8F-1030,Concrete Verticals,4433,0,0,8,0,2003.265215,2003.265215,8,33908.0695,0,33908.0695,,,,2015-06-27 08:00,2015-06-27 16:00,,2015-06-27 08:00,2015-06-27 16:00,2015-06-27 08:00,2015-06-27 16:00,2015-06-27 08:00,2015-06-27 16:00,2015-06-27 08:00,2015-06-27 16:00,,PT_Normal,,,,,5y10xkiWAE6hL4JwdXVC8w,iGes/a6VQ+uf28NHx+S7ww,,,Y,0,0,,,2014-04-05 12:28,2014-04-05 13:21,admin,admin,
3171,142914,1749,35885,642,0,N,N,N,CP_Drtn,TT_Task,DT_FixedDUR2,TK_NotStart,BL3-ST-8F-1040,FW for Slab,4433,0,0,40,0,16202.380057,16202.380057,40,71237.75,0,71237.75,,,,2015-06-28 08:00,2015-07-02 16:00,,2015-06-28 08:00,2015-07-02 16:00,2015-06-28 08:00,2015-07-02 16:00,2015-06-28 08:00,2015-07-02 16:00,2015-06-28 08:00,2015-07-02 16:00,,PT_Normal,,,,,uEMBBaMAkE+IZwwDtdFvlg,9O9xAmq0Twa/prziAF6SxA,,,Y,0,0,,,2014-04-05 12:28,2014-04-05 13:21,admin,admin,
3172,142915,1749,35885,642,0,N,N,N,CP_Drtn,TT_Task,DT_FixedDUR2,TK_NotStart,BL3-ST-8F-1050,Reinforcement for Slab,4433,0,0,40,0,1629.170164,1629.170164,40,108928.6736,0,108928.6736,,,,2015-07-03 08:00,2015-07-07 16:00,,2015-07-03 08:00,2015-07-07 16:00,2015-07-03 08:00,2015-07-07 16:00,2015-07-03 08:00,2015-07-07 16:00,2015-07-03 08:00,2015-07-07 16:00,,PT_Normal,,,,,YufKCaOHLkWNJMyex/+zyg,B9E+MouwRVqyJ6mdKXpoFg,,,Y,0,0,,,2014-04-05 12:28,2014-04-05 13:21,admin,admin,
3173,142916,1749,35885,642,0,N,N,N,CP_Drtn,TT_Task,DT_FixedDUR2,TK_NotStart,BL3-ST-8F-1070,Concrete for Slab,4433,0,0,8,0,4319.680781,4319.680781,8,73115.491,0,73115.491,,,,2015-07-08 08:00,2015-07-08 16:00,,2015-07-08 08:00,2015-07-08 16:00,2015-07-08 08:00,2015-07-08 16:00,2015-07-08 08:00,2015-07-08 16:00,2015-07-08 08:00,2015-07-08 16:00,,PT_Normal,,,,,/UNb9YW520Cra/Qbd/LfzA,MTMLkiqQTtWaAP6qQKgMbw,,,Y,0,0,,,2014-04-05 12:28,2014-04-05 13:21,admin,admin,
3174,142917,1749,35885,642,0,N,N,N,CP_Drtn,TT_Task,DT_FixedDUR2,TK_NotStart,BL3-ST-8F-1010,MEP Works in Vertical Element,,40,40,40,0,160,160,40,1803.546829,0,1803.546829,,,,2015-06-22 08:00,2015-06-26 16:00,,2015-06-17 08:00,2015-06-21 16:00,2015-06-17 08:00,2015-06-21 16:00,2015-06-17 08:00,2015-06-21 16:00,2015-06-22 08:00,2015-06-26 16:00,,PT_Normal,,,,,oR25mdUjUU+EJFn+2kFuNw,apKEEN6pSbOYTkioz6vshA,,,N,0,0,,,2014-04-05 12:28,2014-04-05 13:21,admin,admin,
3175,142918,1749,35885,642,0,N,N,N,CP_Drtn,TT_Task,DT_FixedDUR2,TK_NotStart,BL3-ST-8F-1060,MEP Works in Slab & Beams,,0,0,40,0,320,320,40,3354.018234,0,3354.018234,,,,2015-07-03 08:00,2015-07-07 16:00,,2015-07-03 08:00,2015-07-07 16:00,2015-07-03 08:00,2015-07-07 16:00,2015-07-03 08:00,2015-07-07 16:00,2015-07-03 08:00,2015-07-07 16:00,,PT_Normal,,,,,6r7cdQJkPke42mxftGwzyg,WKKBlgNRSe6Cq01b3cJMUw,,,Y,0,0,,,2014-04-05 12:28,2014-04-05 13:21,admin,admin,
3176,142919,1749,35766,642,0,N,N,N,CP_Drtn,TT_Task,DT_FixedDUR2,TK_NotStart,BL3-FN-8F-1000,Block Works,4433,32,0,144,0,1746.48,1746.48,144,23237.034752,0,23237.034752,,,,2015-08-26 08:00,2015-09-12 16:00,,2015-08-22 08:00,2015-09-08 16:00,2015-08-22 08:00,2015-09-08 16:00,2015-08-22 08:00,2015-09-08 16:00,2015-08-26 08:00,2015-09-12 16:00,,PT_Normal,,,,,UXQLyA/E70u6/rxhFl4BjQ,wFrlkMEnQhOKL2bhFzN3aA,,,N,0,0,,,2014-04-05 12:28,2014-04-05 13:21,admin,admin,
3177,142920,1749,35766,642,0,N,N,N,CP_Drtn,TT_Task,DT_FixedDUR2,TK_NotStart,BL3-FN-8F-1010,Plaster,4433,32,0,120,0,2773.5,2773.5,120,32612.3092,0,32612.3092,,,,2015-09-13 08:00,2015-09-27 16:00,,2015-09-09 08:00,2015-09-23 16:00,2015-09-09 08:00,2015-09-23 16:00,2015-09-09 08:00,2015-09-23 16:00,2015-09-13 08:00,2015-09-27 16:00,,PT_Normal,,,,,l4YaLPffxEG0N3tBAZ9OPw,3ta6irhhS6ucb2gIQwF81w,,,N,0,0,,,2014-04-05 12:28,2014-04-05 13:21,admin,admin,
3178,142921,1749,35766,642,0,N,N,N,CP_Drtn,TT_Task,DT_FixedDUR2,TK_NotStart,BL3-FN-8F-1020,Paint 1st Coat,4433,32,0,120,0,832,832,120,5032.378071,0,5032.378071,,,,2015-09-29 08:00,2015-10-13 16:00,,2015-09-25 08:00,2015-10-09 16:00,2015-09-25 08:00,2015-10-09 16:00,2015-09-25 08:00,2015-10-09 16:00,2015-09-29 08:00,2015-10-13 16:00,,PT_Normal,,,,,n4no7kNnEUm276QzeCNh1g,5FpveMfNSwuHTZUJnmjW7A,,,N,0,0,,,2014-04-05 12:28,2014-04-05 13:21,admin,admin,
3179,142922,1749,35766,642,0,N,N,N,CP_Drtn,TT_Task,DT_FixedDUR2,TK_NotStart,BL3-FN-8F-1030,Ceiling Paint,4433,32,0,80,0,40,40,80,249.352869,0,249.352869,,,,2015-10-09 08:00,2015-10-18 16:00,,2015-10-05 08:00,2015-10-14 16:00,2015-10-05 08:00,2015-10-14 16:00,2015-10-05 08:00,2015-10-14 16:00,2015-10-09 08:00,2015-10-18 16:00,,PT_Normal,,,,,jlb15oTXtEKt0DxBk6sktg,TQO7B1hgQfWd/Ge88Owb4A,,,N,0,0,,,2014-04-05 12:28,2014-04-05 13:21,admin,admin,
3180,142923,1749,35766,642,0,N,N,N,CP_Drtn,TT_Task,DT_FixedDUR2,TK_NotStart,BL3-FN-8F-1040,Waterproofing,4433,280,0,40,0,7,7,40,136.282792,0,136.282792,,,,2015-11-19 08:00,2015-11-23 16:00,,2015-10-15 08:00,2015-10-19 16:00,2015-10-15 08:00,2015-10-19 16:00,2015-10-15 08:00,2015-10-19 16:00,2015-11-19 08:00,2015-11-23 16:00,,PT_Normal,,,,,kE7Em+ALOE+kjD0bayrCwA,4CYF0vhjRAKPABK1kEtBFA,,,N,0,0,,,2014-04-05 12:28,2014-04-05 13:21,admin,admin,
3181,142924,1749,35766,642,0,N,N,N,CP_Drtn,TT_Task,DT_FixedDUR2,TK_NotStart,BL3-FN-8F-1060,Flooring Works,4433,280,0,160,0,1379.7,1379.7,160,32172.316087,0,32172.316087,,,,2015-11-24 08:00,2015-12-13 16:00,,2015-10-20 08:00,2015-11-08 16:00,2015-10-20 08:00,2015-11-08 16:00,2015-10-20 08:00,2015-11-08 16:00,2015-11-24 08:00,2015-12-13 16:00,,PT_Normal,,,,,WSMxGVdvDUKyM9WDnqQSwg,mZ4e0yQvTkek9wCRm9BFIg,,,N,0,0,,,2014-04-05 12:28,2014-04-05 13:21,admin,admin,
3182,142925,1749,35766,642,0,N,N,N,CP_Drtn,TT_Task,DT_FixedDUR2,TK_NotStart,BL3-FN-8F-1100,Final Paint,,80,0,80,0,0,0,80,10,0,10,,,,2016-02-03 08:00,2016-02-12 16:00,,2016-01-24 08:00,2016-02-02 16:00,2016-01-24 08:00,2016-02-02 16:00,2016-01-24 08:00,2016-02-02 16:00,2016-02-03 08:00,2016-02-12 16:00,,PT_Normal,,,,,3VbILYcmbk6WJ7/nPGpoOA,/d109hv/R5yIjX++yVYA8Q,,,N,0,0,,,2014-04-05 12:28,2014-04-05 13:21,admin,admin,
3183,142926,1749,35766,642,0,N,N,N,CP_Drtn,TT_Task,DT_FixedDUR2,TK_NotStart,BL3-FN-8F-1050,Wall Tiling,4433,32,0,80,0,1810,1810,80,8154,0,8154,,,,2015-10-19 08:00,2015-10-28 16:00,,2015-10-15 08:00,2015-10-24 16:00,2015-10-15 08:00,2015-10-24 16:00,2015-10-15 08:00,2015-10-24 16:00,2015-10-19 08:00,2015-10-28 16:00,,PT_Normal,,,,,PUdQbeiVR0+QDbPWp0aQtQ,lXmcOr0ZQfmVht8yb5YYGQ,,,N,0,0,,,2014-04-05 12:28,2014-04-05 13:21,admin,admin,
3184,142927,1749,35766,642,0,N,N,N,CP_Drtn,TT_Task,DT_FixedDUR2,TK_NotStart,BL3-FN-8F-1070,False Ceiling,4433,32,0,120,0,7320,7320,120,63045,0,63045,,,,2015-10-29 08:00,2015-11-12 16:00,,2015-10-25 08:00,2015-11-08 16:00,2015-10-25 08:00,2015-11-08 16:00,2015-10-25 08:00,2015-11-08 16:00,2015-10-29 08:00,2015-11-12 16:00,,PT_Normal,,,,,I8krDrs8XkK5XXLrKCDpOQ,UKHXghteSVW7yxSU7leyDA,,,N,0,0,,,2014-04-05 12:28,2014-04-05 13:21,admin,admin,
3185,142928,1749,35766,642,0,N,N,N,CP_Drtn,TT_Task,DT_FixedDUR2,TK_NotStart,BL3-FN-8F-1080,Hand Rails for Stairs,4433,32,0,120,0,43,43,120,9498.792932,0,9498.792932,,,,2015-11-13 08:00,2015-11-27 16:00,,2015-11-09 08:00,2015-11-23 16:00,2015-11-09 08:00,2015-11-23 16:00,2015-11-09 08:00,2015-11-23 16:00,2015-11-13 08:00,2015-11-27 16:00,,PT_Normal,,,,,ZGX4pOrPQ0uv1so2GM+L5w,GkwvY0/PRVC5JZdarOYv4g,,,N,0,0,,,2014-04-05 12:28,2014-04-05 13:21,admin,admin,
3186,142929,1749,35766,642,0,N,N,N,CP_Drtn,TT_Task,DT_FixedDUR2,TK_NotStart,BL3-FN-8F-1090,Doors Installation,,32,0,120,0,0,0,120,22006.109373,0,22006.109373,,,,2015-11-28 08:00,2015-12-12 16:00,,2015-11-24 08:00,2015-12-08 16:00,2015-11-24 08:00,2015-12-08 16:00,2015-11-24 08:00,2015-12-08 16:00,2015-11-28 08:00,2015-12-12 16:00,,PT_Normal,,,,,zhTx0DXYqEmtzsHewRBpfA,0eoChWT2TKCVamLVtLIj9g,,,N,0,0,,,2014-04-05 12:28,2014-04-05 13:21,admin,admin,
3187,142930,1749,35704,642,0,N,N,N,CP_Drtn,TT_Task,DT_FixedDUR2,TK_NotStart,BL3-ST-9F-1000,Reinforcement for Verticals,4433,0,0,40,0,842.201246,842.201246,40,56313.208727,0,56313.208727,,,,2015-07-09 08:00,2015-07-13 16:00,,2015-07-09 08:00,2015-07-13 16:00,2015-07-09 08:00,2015-07-13 16:00,2015-07-09 08:00,2015-07-13 16:00,2015-07-09 08:00,2015-07-13 16:00,,PT_Normal,,,,,usWxHOt/uESXzky1zWW+Qg,QbNc3TbNReegxsXzp0Ahdg,,,Y,0,0,,,2014-04-05 12:28,2014-04-05 13:21,admin,admin,
3188,142931,1749,35704,642,0,N,N,N,CP_Drtn,TT_Task,DT_FixedDUR2,TK_NotStart,BL3-ST-9F-1020,FW for Verticals,4433,0,0,40,0,9250.408023,9250.408023,40,40673.84,0,40673.84,,,,2015-07-14 08:00,2015-07-18 16:00,,2015-07-14 08:00,2015-07-18 16:00,2015-07-14 08:00,2015-07-18 16:00,2015-07-14 08:00,2015-07-18 16:00,2015-07-14 08:00,2015-07-18 16:00,,PT_Normal,,,,,KkZK6fmxOEyaQx1j3rYGjQ,Nl1BbXWnQMmIUaQyCTr28w,,,Y,0,0,,,2014-04-05 12:28,2014-04-05 13:21,admin,admin,
3189,142932,1749,35704,642,0,N,N,N,CP_Drtn,TT_Task,DT_FixedDUR2,TK_NotStart,BL3-ST-9F-1030,Concrete Verticals,4433,0,0,8,0,2003.265215,2003.265215,8,33908.0695,0,33908.0695,,,,2015-07-19 08:00,2015-07-19 16:00,,2015-07-19 08:00,2015-07-19 16:00,2015-07-19 08:00,2015-07-19 16:00,2015-07-19 08:00,2015-07-19 16:00,2015-07-19 08:00,2015-07-19 16:00,,PT_Normal,,,,,Vq2FuhxpmEGqj+M4Z05ckQ,POJXscuBQ5quW+lGn07E3g,,,Y,0,0,,,2014-04-05 12:28,2014-04-05 13:21,admin,admin,
3190,142933,1749,35704,642,0,N,N,N,CP_Drtn,TT_Task,DT_FixedDUR2,TK_NotStart,BL3-ST-9F-1040,FW for Slab,4433,0,0,40,0,16202.380057,16202.380057,40,71237.75,0,71237.75,,,,2015-07-20 08:00,2015-07-24 16:00,,2015-07-20 08:00,2015-07-24 16:00,2015-07-20 08:00,2015-07-24 16:00,2015-07-20 08:00,2015-07-24 16:00,2015-07-20 08:00,2015-07-24 16:00,,PT_Normal,,,,,o0i8RHyO40maSCplEjPvDQ,vNyINUUlTgmmeHjOWSW6hA,,,Y,0,0,,,2014-04-05 12:28,2014-04-05 13:21,admin,admin,
3191,142934,1749,35704,642,0,N,N,N,CP_Drtn,TT_Task,DT_FixedDUR2,TK_NotStart,BL3-ST-9F-1050,Reinforcement for Slab,4433,0,0,40,0,1629.170164,1629.170164,40,108928.6736,0,108928.6736,,,,2015-07-25 08:00,2015-07-29 16:00,,2015-07-25 08:00,2015-07-29 16:00,2015-07-25 08:00,2015-07-29 16:00,2015-07-25 08:00,2015-07-29 16:00,2015-07-25 08:00,2015-07-29 16:00,,PT_Normal,,,,,rWYVylEya0ygxQGv5bx/yQ,tVzj4DlyQ7ySqI6uvjKQWQ,,,Y,0,0,,,2014-04-05 12:28,2014-04-05 13:21,admin,admin,
3192,142935,1749,35704,642,0,N,N,N,CP_Drtn,TT_Task,DT_FixedDUR2,TK_NotStart,BL3-ST-9F-1070,Concrete for Slab,4433,0,0,8,0,4319.680781,4319.680781,8,73115.491,0,73115.491,,,,2015-07-30 08:00,2015-07-30 16:00,,2015-07-30 08:00,2015-07-30 16:00,2015-07-30 08:00,2015-07-30 16:00,2015-07-30 08:00,2015-07-30 16:00,2015-07-30 08:00,2015-07-30 16:00,,PT_Normal,,,,,6mK5l73xTkyk+2UFy/LBAA,WCLrJoglQZi071YOvQmwVQ,,,Y,0,0,,,2014-04-05 12:28,2014-04-05 13:21,admin,admin,
3193,142936,1749,35704,642,0,N,N,N,CP_Drtn,TT_Task,DT_FixedDUR2,TK_NotStart,BL3-ST-9F-1010,MEP Works in Vertical Element,,40,40,40,0,160,160,40,1803.546829,0,1803.546829,,,,2015-07-14 08:00,2015-07-18 16:00,,2015-07-09 08:00,2015-07-13 16:00,2015-07-09 08:00,2015-07-13 16:00,2015-07-09 08:00,2015-07-13 16:00,2015-07-14 08:00,2015-07-18 16:00,,PT_Normal,,,,,OoJhjEqGkUuIDYd8zRvNmg,knDbKH3CQWubLlOXKkDFYw,,,N,0,0,,,2014-04-05 12:28,2014-04-05 13:21,admin,admin,
3194,142937,1749,35704,642,0,N,N,N,CP_Drtn,TT_Task,DT_FixedDUR2,TK_NotStart,BL3-ST-9F-1060,MEP Works in Slab & Beams,,0,0,40,0,320,320,40,3354.018234,0,3354.018234,,,,2015-07-25 08:00,2015-07-29 16:00,,2015-07-25 08:00,2015-07-29 16:00,2015-07-25 08:00,2015-07-29 16:00,2015-07-25 08:00,2015-07-29 16:00,2015-07-25 08:00,2015-07-29 16:00,,PT_Normal,,,,,XYVr1HZ1Vkmdd3ZLWUMf/A,cmRFKkJWSIO/O+N06plMyg,,,Y,0,0,,,2014-04-05 12:28,2014-04-05 13:21,admin,admin,
3195,142938,1749,35762,642,0,N,N,N,CP_Drtn,TT_Task,DT_FixedDUR2,TK_NotStart,BL3-FN-9F-1000,Block Works,4433,16,0,144,0,1746.48,1746.48,144,23237.034752,0,23237.034752,,,,2015-09-15 08:00,2015-10-02 16:00,,2015-09-13 08:00,2015-09-30 16:00,2015-09-13 08:00,2015-09-30 16:00,2015-09-13 08:00,2015-09-30 16:00,2015-09-15 08:00,2015-10-02 16:00,,PT_Normal,,,,,6Q+nRARJ506+yelY59cPvQ,NhZIhbaUTQazG3scWyw8VA,,,N,0,0,,,2014-04-05 12:28,2014-04-05 13:21,admin,admin,
3196,142939,1749,35762,642,0,N,N,N,CP_Drtn,TT_Task,DT_FixedDUR2,TK_NotStart,BL3-FN-9F-1010,Plaster,4433,16,0,120,0,2773.5,2773.5,120,32612.3092,0,32612.3092,,,,2015-10-03 08:00,2015-10-17 16:00,,2015-10-01 08:00,2015-10-15 16:00,2015-10-01 08:00,2015-10-15 16:00,2015-10-01 08:00,2015-10-15 16:00,2015-10-03 08:00,2015-10-17 16:00,,PT_Normal,,,,,epbOF8/I8k2cW/tXhxBoBQ,pJKJus2rQGSwQ5loFYgG5Q,,,N,0,0,,,2014-04-05 12:28,2014-04-05 13:21,admin,admin,
3197,142940,1749,35762,642,0,N,N,N,CP_Drtn,TT_Task,DT_FixedDUR2,TK_NotStart,BL3-FN-9F-1020,Paint 1st Coat,4433,16,0,120,0,832,832,120,5032.378071,0,5032.378071,,,,2015-10-18 08:00,2015-11-01 16:00,,2015-10-16 08:00,2015-10-30 16:00,2015-10-16 08:00,2015-10-30 16:00,2015-10-16 08:00,2015-10-30 16:00,2015-10-18 08:00,2015-11-01 16:00,,PT_Normal,,,,,VbyYmXq+mkidAyJ6LPMK4w,eDjMGzdTQZGu0ZzInfSSXA,,,N,0,0,,,2014-04-05 12:28,2014-04-05 13:21,admin,admin,
3198,142941,1749,35762,642,0,N,N,N,CP_Drtn,TT_Task,DT_FixedDUR2,TK_NotStart,BL3-FN-9F-1030,Ceiling Paint,4433,16,0,80,0,40,40,80,249.352869,0,249.352869,,,,2015-10-24 08:00,2015-11-02 16:00,,2015-10-22 08:00,2015-10-31 16:00,2015-10-22 08:00,2015-10-31 16:00,2015-10-22 08:00,2015-10-31 16:00,2015-10-24 08:00,2015-11-02 16:00,,PT_Normal,,,,,MYDQt24mLk61RrJ0Qih8Pg,1sles0jsQC2DXlkFEK5I0Q,,,N,0,0,,,2014-04-05 12:28,2014-04-05 13:21,admin,admin,
3199,142942,1749,35762,642,0,N,N,N,CP_Drtn,TT_Task,DT_FixedDUR2,TK_NotStart,BL3-FN-9F-1040,Waterproofing,4433,256,0,40,0,7,7,40,136.282792,0,136.282792,,,,2015-12-03 08:00,2015-12-07 16:00,,2015-11-01 08:00,2015-11-05 16:00,2015-11-01 08:00,2015-11-05 16:00,2015-11-01 08:00,2015-11-05 16:00,2015-12-03 08:00,2015-12-07 16:00,,PT_Normal,,,,,Nl6JRNYpt0ya+uFuiVLLUQ,xid0id4sToCkdRdZq61mpQ,,,N,0,0,,,2014-04-05 12:28,2014-04-05 13:21,admin,admin,
3200,142943,1749,35762,642,0,N,N,N,CP_Drtn,TT_Task,DT_FixedDUR2,TK_NotStart,BL3-FN-9F-1060,Flooring Works,4433,256,0,160,0,1379.7,1379.7,160,32172.316087,0,32172.316087,,,,2015-12-08 08:00,2015-12-27 16:00,,2015-11-06 08:00,2015-11-25 16:00,2015-11-06 08:00,2015-11-25 16:00,2015-11-06 08:00,2015-11-25 16:00,2015-12-08 08:00,2015-12-27 16:00,,PT_Normal,,,,,0XqP57zbdUitdFNRkqQtuQ,+TAAGZD2RSKDX8d2J/ILeQ,,,N,0,0,,,2014-04-05 12:28,2014-04-05 13:21,admin,admin,
3201,142944,1749,35762,642,0,N,N,N,CP_Drtn,TT_Task,DT_FixedDUR2,TK_NotStart,BL3-FN-9F-1100,Final Paint,,48,0,80,0,0,0,80,10,0,10,,,,2016-02-05 08:00,2016-02-14 16:00,,2016-01-30 08:00,2016-02-08 16:00,2016-01-30 08:00,2016-02-08 16:00,2016-01-30 08:00,2016-02-08 16:00,2016-02-05 08:00,2016-02-14 16:00,,PT_Normal,,,,,ZshxBHP+/kyzzJVwiJPQDg,x2kcgzxFTdG8N8lvr84UDg,,,N,0,0,,,2014-04-05 12:28,2014-04-05 13:21,admin,admin,
3202,142945,1749,35762,642,0,N,N,N,CP_Drtn,TT_Task,DT_FixedDUR2,TK_NotStart,BL3-FN-9F-1050,Wall Tiling,4433,16,0,80,0,1810,1810,80,8154,0,8154,,,,2015-11-03 08:00,2015-11-12 16:00,,2015-11-01 08:00,2015-11-10 16:00,2015-11-01 08:00,2015-11-10 16:00,2015-11-01 08:00,2015-11-10 16:00,2015-11-03 08:00,2015-11-12 16:00,,PT_Normal,,,,,qBOGZ07XrUKitnF+Po2CYg,rgjgsVMZRQasXctOqxMmpQ,,,N,0,0,,,2014-04-05 12:28,2014-04-05 13:21,admin,admin,
3203,142946,1749,35762,642,0,N,N,N,CP_Drtn,TT_Task,DT_FixedDUR2,TK_NotStart,BL3-FN-9F-1070,False Ceiling,4433,16,0,120,0,7320,7320,120,63045,0,63045,,,,2015-11-13 08:00,2015-11-27 16:00,,2015-11-11 08:00,2015-11-25 16:00,2015-11-11 08:00,2015-11-25 16:00,2015-11-11 08:00,2015-11-25 16:00,2015-11-13 08:00,2015-11-27 16:00,,PT_Normal,,,,,VpbwWux1IESvJYEyjCjWTQ,9DwwpPpSTFWvlifVYxXkyQ,,,N,0,0,,,2014-04-05 12:28,2014-04-05 13:21,admin,admin,
3204,142947,1749,35762,642,0,N,N,N,CP_Drtn,TT_Task,DT_FixedDUR2,TK_NotStart,BL3-FN-9F-1080,Hand Rails for Stairs,4433,16,0,120,0,43,43,120,9498.792932,0,9498.792932,,,,2015-11-28 08:00,2015-12-12 16:00,,2015-11-26 08:00,2015-12-10 16:00,2015-11-26 08:00,2015-12-10 16:00,2015-11-26 08:00,2015-12-10 16:00,2015-11-28 08:00,2015-12-12 16:00,,PT_Normal,,,,,x6W1rn9roUOdndCJWix/JQ,LKanrf6FSkqZt1CtTQQevg,,,N,0,0,,,2014-04-05 12:28,2014-04-05 13:21,admin,admin,
3205,142948,1749,35762,642,0,N,N,N,CP_Drtn,TT_Task,DT_FixedDUR2,TK_NotStart,BL3-FN-9F-1090,Doors Installation,,16,0,120,0,0,0,120,22006.109373,0,22006.109373,,,,2015-12-13 08:00,2015-12-27 16:00,,2015-12-11 08:00,2015-12-25 16:00,2015-12-11 08:00,2015-12-25 16:00,2015-12-11 08:00,2015-12-25 16:00,2015-12-13 08:00,2015-12-27 16:00,,PT_Normal,,,,,sLB6bSYdkkKvq5L+EVLJaQ,Nu9KJ564RTOcGBuAx3CljA,,,N,0,0,,,2014-04-05 12:28,2014-04-05 13:21,admin,admin,
3206,142949,1749,35741,642,0,N,N,N,CP_Drtn,TT_Task,DT_FixedDUR2,TK_NotStart,BL3-ST-10F-1000,Reinforcement for Verticals,4433,0,0,40,0,842.201246,842.201246,40,56313.208727,0,56313.208727,,,,2015-07-31 08:00,2015-08-04 16:00,,2015-07-31 08:00,2015-08-04 16:00,2015-07-31 08:00,2015-08-04 16:00,2015-07-31 08:00,2015-08-04 16:00,2015-07-31 08:00,2015-08-04 16:00,,PT_Normal,,,,,QjNXQkeD0ESqOUsISIc+JQ,Xrd6ZkntTxW9FS2wOOftPg,,,Y,0,0,,,2014-04-05 12:28,2014-04-05 13:21,admin,admin,
3207,142950,1749,35741,642,0,N,N,N,CP_Drtn,TT_Task,DT_FixedDUR2,TK_NotStart,BL3-ST-10F-1020,FW for Verticals,4433,0,0,40,0,9250.408023,9250.408023,40,40673.84,0,40673.84,,,,2015-08-05 08:00,2015-08-09 16:00,,2015-08-05 08:00,2015-08-09 16:00,2015-08-05 08:00,2015-08-09 16:00,2015-08-05 08:00,2015-08-09 16:00,2015-08-05 08:00,2015-08-09 16:00,,PT_Normal,,,,,6oJM8wmYckm6IBGJ5zJ+SQ,HO2k4rMJT7yecLM5FDUehQ,,,Y,0,0,,,2014-04-05 12:28,2014-04-05 13:21,admin,admin,
3208,142951,1749,35741,642,0,N,N,N,CP_Drtn,TT_Task,DT_FixedDUR2,TK_NotStart,BL3-ST-10F-1030,Concrete Verticals,4433,0,0,8,0,2003.265215,2003.265215,8,33908.0695,0,33908.0695,,,,2015-08-10 08:00,2015-08-10 16:00,,2015-08-10 08:00,2015-08-10 16:00,2015-08-10 08:00,2015-08-10 16:00,2015-08-10 08:00,2015-08-10 16:00,2015-08-10 08:00,2015-08-10 16:00,,PT_Normal,,,,,qwqcGAut4UOPqY8BdgmH/w,S2jq1SG0TcyKonKtSWT/YA,,,Y,0,0,,,2014-04-05 12:28,2014-04-05 13:21,admin,admin,
3209,142952,1749,35741,642,0,N,N,N,CP_Drtn,TT_Task,DT_FixedDUR2,TK_NotStart,BL3-ST-10F-1040,FW for Slab,4433,0,0,40,0,16202.380057,16202.380057,40,71237.75,0,71237.75,,,,2015-08-11 08:00,2015-08-15 16:00,,2015-08-11 08:00,2015-08-15 16:00,2015-08-11 08:00,2015-08-15 16:00,2015-08-11 08:00,2015-08-15 16:00,2015-08-11 08:00,2015-08-15 16:00,,PT_Normal,,,,,9mLbt9Fuu0e5LOR1/rQRqw,rvA3GhlwRiW6Veu1GnDFag,,,Y,0,0,,,2014-04-05 12:28,2014-04-05 13:21,admin,admin,
3210,142953,1749,35741,642,0,N,N,N,CP_Drtn,TT_Task,DT_FixedDUR2,TK_NotStart,BL3-ST-10F-1050,Reinforcement for Slab,4433,0,0,40,0,1629.170164,1629.170164,40,108928.6736,0,108928.6736,,,,2015-08-16 08:00,2015-08-20 16:00,,2015-08-16 08:00,2015-08-20 16:00,2015-08-16 08:00,2015-08-20 16:00,2015-08-16 08:00,2015-08-20 16:00,2015-08-16 08:00,2015-08-20 16:00,,PT_Normal,,,,,Wd18hdUjc0KKM7htPstV5w,N/vWl1qJRyecg1yTPQ3GCw,,,Y,0,0,,,2014-04-05 12:28,2014-04-05 13:21,admin,admin,
3211,142954,1749,35741,642,0,N,N,N,CP_Drtn,TT_Task,DT_FixedDUR2,TK_NotStart,BL3-ST-10F-1070,Concrete for Slab,4433,0,0,8,0,4319.680781,4319.680781,8,73115.491,0,73115.491,,,,2015-08-21 08:00,2015-08-21 16:00,,2015-08-21 08:00,2015-08-21 16:00,2015-08-21 08:00,2015-08-21 16:00,2015-08-21 08:00,2015-08-21 16:00,2015-08-21 08:00,2015-08-21 16:00,,PT_Normal,,,,,PdxqvlR8RkK7JgoOssSJ+Q,VWwUXcx4RBGMjPn7S6eVIA,,,Y,0,0,,,2014-04-05 12:28,2014-04-05 13:21,admin,admin,
3212,142955,1749,35741,642,0,N,N,N,CP_Drtn,TT_Task,DT_FixedDUR2,TK_NotStart,BL3-ST-10F-1010,MEP Works in Vertical Element,,40,40,40,0,160,160,40,1803.546829,0,1803.546829,,,,2015-08-05 08:00,2015-08-09 16:00,,2015-07-31 08:00,2015-08-04 16:00,2015-07-31 08:00,2015-08-04 16:00,2015-07-31 08:00,2015-08-04 16:00,2015-08-05 08:00,2015-08-09 16:00,,PT_Normal,,,,,zcgHpkmemUmV/Hw4JqEKBA,nHxIvWTNSdG8/pLkJDjj8w,,,N,0,0,,,2014-04-05 12:28,2014-04-05 13:21,admin,admin,
3213,142956,1749,35741,642,0,N,N,N,CP_Drtn,TT_Task,DT_FixedDUR2,TK_NotStart,BL3-ST-10F-1060,MEP Works in Slab & Beams,,0,0,40,0,320,320,40,3354.018234,0,3354.018234,,,,2015-08-16 08:00,2015-08-20 16:00,,2015-08-16 08:00,2015-08-20 16:00,2015-08-16 08:00,2015-08-20 16:00,2015-08-16 08:00,2015-08-20 16:00,2015-08-16 08:00,2015-08-20 16:00,,PT_Normal,,,,,50wlXB9k90ibIfW/cJ+iRw,xjne34VATC2t2SOpnwEE6g,,,Y,0,0,,,2014-04-05 12:28,2014-04-05 13:21,admin,admin,
3214,142957,1749,35808,642,0,N,N,N,CP_Drtn,TT_Task,DT_FixedDUR2,TK_NotStart,BL3-FN-10F-1000,Block Works,4433,0,0,144,0,1746.48,1746.48,144,23237.034752,0,23237.034752,,,,2015-09-27 08:00,2015-10-14 16:00,,2015-09-27 08:00,2015-10-14 16:00,2015-09-27 08:00,2015-10-14 16:00,2015-09-27 08:00,2015-10-14 16:00,2015-09-27 08:00,2015-10-14 16:00,,PT_Normal,,,,,3yFMFBIuLkq8BS0VTtdNYQ,mi8f/5qmTWq7V7xVv0x/IQ,,,Y,0,0,,,2014-04-05 12:28,2014-04-05 13:21,admin,admin,
3215,142958,1749,35808,642,0,N,N,N,CP_Drtn,TT_Task,DT_FixedDUR2,TK_NotStart,BL3-FN-10F-1010,Plaster,4433,0,0,112,0,2773.5,2773.5,112,32611.3092,0,32611.3092,,,,2015-10-15 08:00,2015-10-28 16:00,,2015-10-15 08:00,2015-10-28 16:00,2015-10-15 08:00,2015-10-28 16:00,2015-10-15 08:00,2015-10-28 16:00,2015-10-15 08:00,2015-10-28 16:00,,PT_Normal,,,,,RR6KU0CHkEOyxSfu1SvJHA,DMJAVBZGQpaNb8Uvuh3Nxg,,,Y,0,0,,,2014-04-05 12:28,2014-04-05 13:21,admin,admin,
3216,142959,1749,35808,642,0,N,N,N,CP_Drtn,TT_Task,DT_FixedDUR2,TK_NotStart,BL3-FN-10F-1020,Paint 1st Coat,4433,0,0,96,0,832,832,96,5029.378071,0,5029.378071,,,,2015-10-29 08:00,2015-11-09 16:00,,2015-10-29 08:00,2015-11-09 16:00,2015-10-29 08:00,2015-11-09 16:00,2015-10-29 08:00,2015-11-09 16:00,2015-10-29 08:00,2015-11-09 16:00,,PT_Normal,,,,,ROmqSwS62EmmVBSNPrO48Q,dEFr35GmSCaHz6dZxUVybA,,,Y,0,0,,,2014-04-05 12:28,2014-04-05 13:21,admin,admin,
3217,142960,1749,35808,642,0,N,N,N,CP_Drtn,TT_Task,DT_FixedDUR2,TK_NotStart,BL3-FN-10F-1030,Ceiling Paint,4433,0,0,88,0,40,40,88,250.352869,0,250.352869,,,,2015-11-10 08:00,2015-11-20 16:00,,2015-11-10 08:00,2015-11-20 16:00,2015-11-10 08:00,2015-11-20 16:00,2015-11-10 08:00,2015-11-20 16:00,2015-11-10 08:00,2015-11-20 16:00,,PT_Normal,,,,,ovJ/Jw3/0kWF1xZTq3Flyg,z2x8+IfPQ0ylvawCCxVnqw,,,Y,0,0,,,2014-04-05 12:28,2014-04-05 13:21,admin,admin,
3218,142961,1749,35808,642,0,N,N,N,CP_Drtn,TT_Task,DT_FixedDUR2,TK_NotStart,BL3-FN-10F-1040,Waterproofing,4433,168,0,80,0,14,14,80,272,0,272,,,,2015-12-12 08:00,2015-12-21 16:00,,2015-11-21 08:00,2015-11-30 16:00,2015-11-21 08:00,2015-11-30 16:00,2015-11-21 08:00,2015-11-30 16:00,2015-12-12 08:00,2015-12-21 16:00,,PT_Normal,,,,,bCpIUJ6Thk+guasox6yjlw,J8UunJiLSmyU9w60Kboyxg,,,N,0,0,,,2014-04-05 12:28,2014-04-05 13:21,admin,admin,
3219,142962,1749,35808,642,0,N,N,N,CP_Drtn,TT_Task,DT_FixedDUR2,TK_NotStart,BL3-FN-10F-1060,Flooring Works,4433,168,0,160,0,1379.7,1379.7,160,32172.316087,0,32172.316087,,,,2015-12-22 08:00,2016-01-10 16:00,,2015-12-01 08:00,2015-12-20 16:00,2015-12-01 08:00,2015-12-20 16:00,2015-12-01 08:00,2015-12-20 16:00,2015-12-22 08:00,2016-01-10 16:00,,PT_Normal,,,,,W7O0oB07Z0mkQvoH6sYpYg,OtjbGkYIRRORaF5rUh5bjA,,,N,0,0,,,2014-04-05 12:28,2014-04-05 13:21,admin,admin,
3220,142963,1749,35808,642,0,N,N,N,CP_Drtn,TT_Task,DT_FixedDUR2,TK_NotStart,BL3-FN-10F-1100,Final Paint,,104,56,80,0,0,0,80,10,0,10,,,,2016-02-07 08:00,2016-02-16 16:00,,2016-01-25 08:00,2016-02-03 16:00,2016-01-25 08:00,2016-02-03 16:00,2016-01-25 08:00,2016-02-03 16:00,2016-02-07 08:00,2016-02-16 16:00,,PT_Normal,,,,,nFcLU11uvUyskLlUSctOLQ,K3sX4X01TAymQlI3isx1xg,,,N,0,0,,,2014-04-05 12:28,2014-04-05 13:21,admin,admin,
3221,142964,1749,35808,642,0,N,N,N,CP_Drtn,TT_Task,DT_FixedDUR2,TK_NotStart,BL3-FN-10F-1050,Wall Tiling,4433,0,0,112,0,1810,1810,112,8158,0,8158,,,,2015-11-21 08:00,2015-12-04 16:00,,2015-11-21 08:00,2015-12-04 16:00,2015-11-21 08:00,2015-12-04 16:00,2015-11-21 08:00,2015-12-04 16:00,2015-11-21 08:00,2015-12-04 16:00,,PT_Normal,,,,,Y++c2IecGUqKHq666vNOAg,TUCIl0NUTOiyH98CdHCpCg,,,Y,0,0,,,2014-04-05 12:28,2014-04-05 13:21,admin,admin,
3222,142965,1749,35808,642,0,N,N,N,CP_Drtn,TT_Task,DT_FixedDUR2,TK_NotStart,BL3-FN-10F-1070,False Ceiling,4433,0,0,144,0,7320,7320,144,63048,0,63048,,,,2015-12-05 08:00,2015-12-22 16:00,,2015-12-05 08:00,2015-12-22 16:00,2015-12-05 08:00,2015-12-22 16:00,2015-12-05 08:00,2015-12-22 16:00,2015-12-05 08:00,2015-12-22 16:00,,PT_Normal,,,,,O1e35Ea2AESQUcOp3GTcog,hMrmeX9iQhSTGJZuj1ILQg,,,Y,0,0,,,2014-04-05 12:28,2014-04-05 13:21,admin,admin,
3223,142966,1749,35808,642,0,N,N,N,CP_Drtn,TT_Task,DT_FixedDUR2,TK_NotStart,BL3-FN-10F-1080,Hand Rails for Stairs,4433,0,0,120,0,43,43,120,9498.792932,0,9498.792932,,,,2015-12-23 08:00,2016-01-06 16:00,,2015-12-23 08:00,2016-01-06 16:00,2015-12-23 08:00,2016-01-06 16:00,2015-12-23 08:00,2016-01-06 16:00,2015-12-23 08:00,2016-01-06 16:00,,PT_Normal,,,,,NNgFTzLn3k25BopO+LnvdA,QM+YVFabSSWz/gUH+RoD7w,,,Y,0,0,,,2014-04-05 12:28,2014-04-05 13:21,admin,admin,
3224,142967,1749,35808,642,0,N,N,N,CP_Drtn,TT_Task,DT_FixedDUR2,TK_NotStart,BL3-FN-10F-1090,Doors Installation,,0,0,120,0,0,0,120,22006.109373,0,22006.109373,,,,2016-01-07 08:00,2016-01-21 16:00,,2016-01-07 08:00,2016-01-21 16:00,2016-01-07 08:00,2016-01-21 16:00,2016-01-07 08:00,2016-01-21 16:00,2016-01-07 08:00,2016-01-21 16:00,,PT_Normal,,,,,6IfxpeDGRkmQEXW3/Zu7XA,afy87eHwTRSYDtv3R7JdXQ,,,Y,0,0,,,2014-04-05 12:28,2014-04-05 13:21,admin,admin,
3225,142968,1749,35863,642,0,N,N,N,CP_Drtn,TT_Task,DT_FixedDUR2,TK_NotStart,BL3-ST-11F-1000,Reinforcement for Verticals,4433,0,0,40,0,842.201246,842.201246,40,56313.208727,0,56313.208727,,,,2015-08-22 08:00,2015-08-26 16:00,,2015-08-22 08:00,2015-08-26 16:00,2015-08-22 08:00,2015-08-26 16:00,2015-08-22 08:00,2015-08-26 16:00,2015-08-22 08:00,2015-08-26 16:00,,PT_Normal,,,,,SGuKIYsShEmVOEeC/JFakw,QdELfSmLRTi/ipR+dk5o7Q,,,Y,0,0,,,2014-04-05 12:28,2014-04-05 13:21,admin,admin,
3226,142969,1749,35863,642,0,N,N,N,CP_Drtn,TT_Task,DT_FixedDUR2,TK_NotStart,BL3-ST-11F-1020,FW for Verticals,4433,0,0,40,0,12893.245006,12893.245006,40,56690.1,0,56690.1,,,,2015-08-27 08:00,2015-08-31 16:00,,2015-08-27 08:00,2015-08-31 16:00,2015-08-27 08:00,2015-08-31 16:00,2015-08-27 08:00,2015-08-31 16:00,2015-08-27 08:00,2015-08-31 16:00,,PT_Normal,,,,,3AFKBvyUX0CVhfDyPalsFw,oq4KOX+MT9SS+zJ/VpIKqg,,,Y,0,0,,,2014-04-05 12:28,2014-04-05 13:21,admin,admin,
3227,142970,1749,35863,642,0,N,N,N,CP_Drtn,TT_Task,DT_FixedDUR2,TK_NotStart,BL3-ST-11F-1030,Concrete Verticals,4433,0,0,8,0,2120.831609,2120.831609,8,35367,0,35367,,,,2015-09-01 08:00,2015-09-01 16:00,,2015-09-01 08:00,2015-09-01 16:00,2015-09-01 08:00,2015-09-01 16:00,2015-09-01 08:00,2015-09-01 16:00,2015-09-01 08:00,2015-09-01 16:00,,PT_Normal,,,,,MZBFsdo5ZUiWO9DiiEmkVw,G+Ao7W2DRQ2xT3tBUR+Oyg,,,Y,0,0,,,2014-04-05 12:28,2014-04-05 13:21,admin,admin,
3228,142971,1749,35863,642,0,N,N,N,CP_Drtn,TT_Task,DT_FixedDUR2,TK_NotStart,BL3-ST-11F-1040,FW for Slab,4433,0,0,40,0,14506.596754,14506.596754,40,63779.72,0,63779.72,,,,2015-09-02 08:00,2015-09-06 16:00,,2015-09-02 08:00,2015-09-06 16:00,2015-09-02 08:00,2015-09-06 16:00,2015-09-02 08:00,2015-09-06 16:00,2015-09-02 08:00,2015-09-06 16:00,,PT_Normal,,,,,8zZGE9exu0muZWfnIAni3w,9xEWge+mQBShaLe0vm1DQg,,,Y,0,0,,,2014-04-05 12:28,2014-04-05 13:21,admin,admin,
3229,142972,1749,35863,642,0,N,N,N,CP_Drtn,TT_Task,DT_FixedDUR2,TK_NotStart,BL3-ST-11F-1050,Reinforcement for Slab,4433,0,0,40,0,1629.170164,1629.170164,40,108928.6736,0,108928.6736,,,,2015-09-07 08:00,2015-09-11 16:00,,2015-09-07 08:00,2015-09-11 16:00,2015-09-07 08:00,2015-09-11 16:00,2015-09-07 08:00,2015-09-11 16:00,2015-09-07 08:00,2015-09-11 16:00,,PT_Normal,,,,,rDuYoatyDE2IyMKWQ+XShA,DswZyrP2SeO3lM58nqOXoQ,,,Y,0,0,,,2014-04-05 12:28,2014-04-05 13:21,admin,admin,
3230,142973,1749,35863,642,0,N,N,N,CP_Drtn,TT_Task,DT_FixedDUR2,TK_NotStart,BL3-ST-11F-1070,Concrete for Slab,4433,0,0,8,0,4319.680781,4319.680781,8,73115.491,0,73115.491,,,,2015-09-12 08:00,2015-09-12 16:00,,2015-09-12 08:00,2015-09-12 16:00,2015-09-12 08:00,2015-09-12 16:00,2015-09-12 08:00,2015-09-12 16:00,2015-09-12 08:00,2015-09-12 16:00,,PT_Normal,,,,,YPUdB740zEO9NAbDEgvuAQ,DnSs6iH6SCmsQAU8O38FEw,,,Y,0,0,,,2014-04-05 12:28,2014-04-05 13:21,admin,admin,
3231,142974,1749,35863,642,0,N,N,N,CP_Drtn,TT_Task,DT_FixedDUR2,TK_NotStart,BL3-ST-11F-1010,MEP Works in Vertical Element,,40,40,40,0,160,160,40,1803.546829,0,1803.546829,,,,2015-08-27 08:00,2015-08-31 16:00,,2015-08-22 08:00,2015-08-26 16:00,2015-08-22 08:00,2015-08-26 16:00,2015-08-22 08:00,2015-08-26 16:00,2015-08-27 08:00,2015-08-31 16:00,,PT_Normal,,,,,8VYBnXm+5UmiUOEFfQNeOQ,r1hJzZCkRzCBxkVodDbzzQ,,,N,0,0,,,2014-04-05 12:28,2014-04-05 13:21,admin,admin,
3232,142975,1749,35863,642,0,N,N,N,CP_Drtn,TT_Task,DT_FixedDUR2,TK_NotStart,BL3-ST-11F-1060,MEP Works in Slab & Beams,,0,0,40,0,320,320,40,3354.018234,0,3354.018234,,,,2015-09-07 08:00,2015-09-11 16:00,,2015-09-07 08:00,2015-09-11 16:00,2015-09-07 08:00,2015-09-11 16:00,2015-09-07 08:00,2015-09-11 16:00,2015-09-07 08:00,2015-09-11 16:00,,PT_Normal,,,,,HZorAYDMHkSxFbwuvfJtkQ,88/0n+KVTJ+nfCOFGwJWrw,,,Y,0,0,,,2014-04-05 12:28,2014-04-05 13:21,admin,admin,
3233,142976,1749,35863,644,0,N,N,N,CP_Drtn,TT_Task,DT_FixedDUR2,TK_NotStart,BL3-ST-11F-1080,Reinforcement for Staircase Verticals,,0,0,40,0,0,0,40,5,0,5,,,,2015-09-13 08:00,2015-09-17 16:00,,2015-09-13 08:00,2015-09-17 16:00,2015-09-13 08:00,2015-09-17 16:00,2015-09-13 08:00,2015-09-17 16:00,2015-09-13 08:00,2015-09-17 16:00,,PT_Normal,,,,,FFK59a+890KxE9hxR/3jWQ,trmuG3JSLUOp3yHRxyMGZQ,,,Y,0,0,,,2014-04-05 12:28,2014-04-05 13:21,admin,admin,
3234,142977,1749,35863,644,0,N,N,N,CP_Drtn,TT_Task,DT_FixedDUR2,TK_NotStart,BL3-ST-11F-1110,FW for Staircase Verticals,,0,0,32,0,0,0,32,4,0,4,,,,2015-09-19 08:00,2015-09-22 16:00,,2015-09-19 08:00,2015-09-22 16:00,2015-09-19 08:00,2015-09-22 16:00,2015-09-19 08:00,2015-09-22 16:00,2015-09-19 08:00,2015-09-22 16:00,,PT_Normal,,,,,GdYCFtAzaE+efQASFZCSfA,/BrJt/qJXUSiVBa5hwwYxA,,,Y,0,0,,,2014-04-05 12:28,2014-04-05 13:21,admin,admin,
3235,142978,1749,35863,644,0,N,N,N,CP_Drtn,TT_Task,DT_FixedDUR2,TK_NotStart,BL3-ST-11F-1130,Concrete for Staircase Verticals,,0,0,8,0,0,0,8,1,0,1,,,,2015-09-23 08:00,2015-09-23 16:00,,2015-09-23 08:00,2015-09-23 16:00,2015-09-23 08:00,2015-09-23 16:00,2015-09-23 08:00,2015-09-23 16:00,2015-09-23 08:00,2015-09-23 16:00,,PT_Normal,,,,,MmSsCqE3PUigDyuCTXc3GA,BBBK06AeGkudJtNNIv3lIQ,,,Y,0,0,,,2014-04-05 12:28,2014-04-05 13:21,admin,admin,
3236,142979,1749,35863,644,0,N,N,N,CP_Drtn,TT_Task,DT_FixedDUR2,TK_NotStart,BL3-ST-11F-1140,FW for Staircase Slab,,0,0,24,0,0,0,24,3,0,3,,,,2015-09-24 08:00,2015-09-27 16:00,,2015-09-24 08:00,2015-09-27 16:00,2015-09-24 08:00,2015-09-27 16:00,2015-09-24 08:00,2015-09-27 16:00,2015-09-24 08:00,2015-09-27 16:00,,PT_Normal,,,,,/CoGAtetyEyOIKoz48pSQw,Xt2vY0HmrkiztscMT1BJBg,,,Y,0,0,,,2014-04-05 12:28,2014-04-05 13:21,admin,admin,
3237,142980,1749,35863,644,0,N,N,N,CP_Drtn,TT_Task,DT_FixedDUR2,TK_NotStart,BL3-ST-11F-1150,Reinforcement for Staircase Slab,,0,0,24,0,0,0,24,3,0,3,,,,2015-09-28 08:00,2015-09-30 16:00,,2015-09-28 08:00,2015-09-30 16:00,2015-09-28 08:00,2015-09-30 16:00,2015-09-28 08:00,2015-09-30 16:00,2015-09-28 08:00,2015-09-30 16:00,,PT_Normal,,,,,pwOXaqo+5Eiht4vN/BWZLQ,PSDQ4Z/rwUmEibxqfwazIg,,,Y,0,0,,,2014-04-05 12:28,2014-04-05 13:21,admin,admin,
3238,142981,1749,35863,644,0,N,N,N,CP_Drtn,TT_Task,DT_FixedDUR2,TK_NotStart,BL3-ST-11F-1160,Concrete for Staircase Slab,,0,0,8,0,0,0,8,1,0,1,,,,2015-10-01 08:00,2015-10-01 16:00,,2015-10-01 08:00,2015-10-01 16:00,2015-10-01 08:00,2015-10-01 16:00,2015-10-01 08:00,2015-10-01 16:00,2015-10-01 08:00,2015-10-01 16:00,,PT_Normal,,,,,w3lkKX5wCkm4hcfePI6TDQ,GVnljpJgdUqxvbsc2J+DaA,,,Y,0,0,,,2014-04-05 12:28,2014-04-05 13:21,admin,admin,
3239,142982,1749,35863,644,0,N,N,N,CP_Drtn,TT_Task,DT_FixedDUR2,TK_NotStart,BL3-ST-11F-1100,Reinforcement for Parapet,,240,16,24,0,0,0,24,3,0,3,,,,2015-10-21 08:00,2015-10-24 16:00,,2015-09-16 08:00,2015-09-19 16:00,2015-09-16 08:00,2015-09-19 16:00,2015-09-16 08:00,2015-09-19 16:00,2015-10-21 08:00,2015-10-24 16:00,,PT_Normal,,,,,vGQLOw8GvEqItXpMnyDJVQ,nYKcdw9YL02iE3FeTDHOcg,,,N,0,0,,,2014-04-05 12:28,2014-04-05 13:21,admin,admin,
3240,142983,1749,35863,644,0,N,N,N,CP_Drtn,TT_Task,DT_FixedDUR2,TK_NotStart,BL3-ST-11F-1090,FW for Parapet,,224,0,64,0,0,0,64,8,0,8,,,,2015-10-15 08:00,2015-10-24 16:00,,2015-09-13 08:00,2015-09-21 16:00,2015-09-13 08:00,2015-09-21 16:00,2015-09-13 08:00,2015-09-21 16:00,2015-10-15 08:00,2015-10-24 16:00,,PT_Normal,,,,,SlExHfb6/06lohznIt3K2Q,QjrHAaYpb0CoRbnJf2ApTg,,,N,0,0,,,2014-04-05 12:28,2014-04-05 13:21,admin,admin,
3241,142984,1749,35863,644,0,N,N,N,CP_Drtn,TT_Task,DT_FixedDUR2,TK_NotStart,BL3-ST-11F-1120,Concrete for Parapet,,224,224,8,0,0,0,8,1,0,1,,,,2015-10-25 08:00,2015-10-25 16:00,,2015-09-22 08:00,2015-09-22 16:00,2015-09-22 08:00,2015-09-22 16:00,2015-09-22 08:00,2015-09-22 16:00,2015-10-25 08:00,2015-10-25 16:00,,PT_Normal,,,,,kAPKpxna9EODc7Mzjqv74A,TaN1PRG+aUunFuhKhyZh6g,,,N,0,0,,,2014-04-05 12:28,2014-04-05 13:21,admin,admin,
3242,142985,1749,35789,642,0,N,N,N,CP_Drtn,TT_Task,DT_FixedDUR2,TK_NotStart,BL3-FN-11F-1000,Block Works,4433,0,0,80,0,1746.48,1746.48,80,23229.034752,0,23229.034752,,,,2015-10-16 08:00,2015-10-25 16:00,,2015-10-16 08:00,2015-10-25 16:00,2015-10-16 08:00,2015-10-25 16:00,2015-10-16 08:00,2015-10-25 16:00,2015-10-16 08:00,2015-10-25 16:00,,PT_Normal,,,,,gl+9L/B890ex1UAQILq5Fw,wxA1MZ/iTESYJSNMrczd+Q,,,Y,0,0,,,2014-04-05 12:28,2014-04-05 13:21,admin,admin,
3243,142986,1749,35789,642,0,N,N,N,CP_Drtn,TT_Task,DT_FixedDUR2,TK_NotStart,BL3-FN-11F-1010,Plaster,4433,0,0,112,0,2773.5,2773.5,112,32611.3092,0,32611.3092,,,,2015-10-26 08:00,2015-11-08 16:00,,2015-10-26 08:00,2015-11-08 16:00,2015-10-26 08:00,2015-11-08 16:00,2015-10-26 08:00,2015-11-08 16:00,2015-10-26 08:00,2015-11-08 16:00,,PT_Normal,,,,,PJaUjh/KMUm2ZagRoGxB3w,Pm8DreBGSe2/FyBxSDkUzw,,,Y,0,0,,,2014-04-05 12:28,2014-04-05 13:21,admin,admin,
3244,142987,1749,35789,642,0,N,N,N,CP_Drtn,TT_Task,DT_FixedDUR2,TK_NotStart,BL3-FN-11F-1020,Paint 1st Coat,4433,0,0,56,0,872,872,56,5263,0,5263,,,,2015-11-09 08:00,2015-11-15 16:00,,2015-11-09 08:00,2015-11-15 16:00,2015-11-09 08:00,2015-11-15 16:00,2015-11-09 08:00,2015-11-15 16:00,2015-11-09 08:00,2015-11-15 16:00,,PT_Normal,,,,,ug8S+0hwDUy5Viu0FZRrfw,KzSLeyNESRq1SD7IEce9zw,,,Y,0,0,,,2014-04-05 12:28,2014-04-05 13:21,admin,admin,
3245,142988,1749,35789,642,0,N,N,N,CP_Drtn,TT_Task,DT_FixedDUR2,TK_NotStart,BL3-FN-11F-1040,Flooring Works,4433,0,0,184,0,1379.7,1379.7,184,32175.316087,0,32175.316087,,,,2015-11-16 08:00,2015-12-08 16:00,,2015-11-16 08:00,2015-12-08 16:00,2015-11-16 08:00,2015-12-08 16:00,2015-11-16 08:00,2015-12-08 16:00,2015-11-16 08:00,2015-12-08 16:00,,PT_Normal,,,,,qviNfhSi50WttPjZaPQ3rg,LGeYLBdRQoGw9wEBscZh7Q,,,Y,0,0,,,2014-04-05 12:28,2014-04-05 13:21,admin,admin,
3246,142989,1749,35789,642,0,N,N,N,CP_Drtn,TT_Task,DT_FixedDUR2,TK_NotStart,BL3-FN-11F-1060,Final Paint,,216,168,80,0,0,0,80,10,0,10,,,,2016-02-09 08:00,2016-02-18 16:00,,2016-01-13 08:00,2016-01-22 16:00,2016-01-13 08:00,2016-01-22 16:00,2016-01-13 08:00,2016-01-22 16:00,2016-02-09 08:00,2016-02-18 16:00,,PT_Normal,,,,,AUBBEu5USE6SINmQoZOQcw,DYNbFTTsQKioMCoHuDI7MQ,,,N,0,0,,,2014-04-05 12:28,2014-04-05 13:21,admin,admin,
3247,142990,1749,35789,642,0,N,N,N,CP_Drtn,TT_Task,DT_FixedDUR2,TK_NotStart,BL3-FN-11F-1050,Hand Rails for Stairs,4433,488,232,120,0,43,43,120,9498.792932,0,9498.792932,,,,2016-02-08 08:00,2016-02-22 16:00,,2015-12-09 08:00,2015-12-23 16:00,2015-12-09 08:00,2015-12-23 16:00,2015-12-09 08:00,2015-12-23 16:00,2016-02-08 08:00,2016-02-22 16:00,,PT_Normal,,,,,S7H92mdR2UaU35POMYiokA,iRJE99/6Tta27hXYueGPig,,,N,0,0,,,2014-04-05 12:28,2014-04-05 13:21,admin,admin,
3248,142991,1749,35789,642,0,N,N,N,CP_Drtn,TT_Task,DT_FixedDUR2,TK_NotStart,BL3-FN-11F-1070,Doors Installation,,256,256,120,0,0,0,120,22006.109373,0,22006.109373,,,,2016-02-23 08:00,2016-03-08 16:00,,2016-01-22 08:00,2016-02-05 16:00,2016-01-22 08:00,2016-02-05 16:00,2016-01-22 08:00,2016-02-05 16:00,2016-02-23 08:00,2016-03-08 16:00,,PT_Normal,,,,,ILv6KOqXTkCFAzp4j3O14w,PymBHEsTRkeRZqQmlH6+xg,,,N,0,0,,,2014-04-05 12:28,2014-04-05 13:21,admin,admin,
3249,142992,1749,35873,642,0,N,N,N,CP_Drtn,TT_Task,DT_FixedDUR2,TK_NotStart,P4-ST-B2-1020,Formwork,4433,896,0,96,0,21658.073503,21658.073503,96,175736.370891,0,175736.370891,,,,2014-09-18 08:00,2014-10-01 16:00,,2014-04-24 08:00,2014-05-08 16:00,2014-04-24 08:00,2014-05-08 16:00,2014-04-24 08:00,2014-05-08 16:00,2014-09-18 08:00,2014-10-01 16:00,,PT_Normal,,,,,/8dgALszaEGmp4AeMSoQFA,4+U0bgG4SrW7TjNzva/pSA,,,N,0,0,,,2014-04-05 12:28,2014-04-05 13:21,admin,admin,
3250,142993,1749,35873,642,0,N,N,N,CP_Drtn,TT_Task,DT_FixedDUR2,TK_NotStart,P4-ST-B2-1010,Waterproofing,4433,896,0,112,0,182.774163,182.774163,112,14,0,14,,,,2014-09-02 08:00,2014-09-17 16:00,,2014-04-08 08:00,2014-04-23 16:00,2014-04-08 08:00,2014-04-23 16:00,2014-04-08 08:00,2014-04-23 16:00,2014-09-02 08:00,2014-09-17 16:00,,PT_Normal,,,,,y96HF5rrNEKBLjU5ujOI2Q,HExDsg5GQtG8h3xxBV/2Qg,,,N,0,0,,,2014-04-05 12:28,2014-04-05 13:21,admin,admin,
3251,142994,1749,35873,642,0,N,N,N,CP_Drtn,TT_Task,DT_FixedDUR2,TK_NotStart,P4-ST-B2-1030,Reinforcement,4433,896,0,176,0,2768.750414,2768.750414,176,341650.37965,0,341650.37965,,,,2014-10-02 08:00,2014-11-04 16:00,,2014-05-10 08:00,2014-06-03 16:00,2014-05-10 08:00,2014-06-03 16:00,2014-05-10 08:00,2014-06-03 16:00,2014-10-02 08:00,2014-11-04 16:00,,PT_Normal,,,,,nkdpZWGm/kywm5qeY/v3Og,Fbf1VKBtSR+H8Wx7kPfVkQ,,,N,0,0,,,2014-04-05 12:28,2014-04-05 13:21,admin,admin,
3252,142995,1749,35873,642,0,N,N,N,CP_Drtn,TT_Task,DT_FixedDUR2,TK_NotStart,P4-ST-B2-1060,Concrete for Raft,4433,896,0,8,0,14424.884354,14424.884354,8,443936.629646,0,443936.629646,,,,2014-11-05 08:00,2014-11-05 16:00,,2014-06-04 08:00,2014-06-04 16:00,2014-06-04 08:00,2014-06-04 16:00,2014-06-04 08:00,2014-06-04 16:00,2014-11-05 08:00,2014-11-05 16:00,,PT_Normal,,,,,eOV7YHR3TUy5QK3S0uOsEw,t40amztvT1GVKWt7g/1SRQ,,,N,0,0,,,2014-04-05 12:28,2014-04-05 13:21,admin,admin,
3253,142996,1749,35873,642,0,N,N,N,CP_Drtn,TT_Task,DT_FixedDUR2,TK_NotStart,P4-ST-B2-1000,Blinding,,896,0,40,0,0,0,40,5,0,5,,,,2014-08-27 08:00,2014-09-01 16:00,,2014-04-02 08:00,2014-04-07 16:00,2014-04-02 08:00,2014-04-07 16:00,2014-04-02 08:00,2014-04-07 16:00,2014-08-27 08:00,2014-09-01 16:00,,PT_Normal,,,,,3nOgx4MDDUelZkgEh/iATQ,yOqIKHJrQrilySvE4n5Y/A,,,N,0,0,,,2014-04-05 12:28,2014-04-05 13:21,admin,admin,
3254,142997,1749,35873,642,0,N,N,N,CP_Drtn,TT_Task,DT_FixedDUR2,TK_NotStart,P4-ST-B2-1040,MEP Works in Raft,4456,896,0,40,0,312,312,40,13056.000019,0,13056.000019,,,,2014-10-28 08:00,2014-11-04 16:00,,2014-05-29 08:00,2014-06-03 16:00,2014-05-29 08:00,2014-06-03 16:00,2014-05-29 08:00,2014-06-03 16:00,2014-10-28 08:00,2014-11-04 16:00,,PT_Normal,,,,,QavOikmHk0Kzds65fZc80A,+KC5ytKSTC6fYZohUuy4tw,,,N,0,0,,,2014-04-05 12:28,2014-04-05 13:21,admin,admin,
3255,142998,1749,35873,642,0,N,N,N,CP_Drtn,TT_Task,DT_FixedDUR2,TK_NotStart,P4-ST-B2-1050,Earthing Works,4480,896,0,40,0,408,408,40,8367.291801,0,8367.291801,,,,2014-10-28 08:00,2014-11-04 16:00,,2014-05-29 08:00,2014-06-03 16:00,2014-05-29 08:00,2014-06-03 16:00,2014-05-29 08:00,2014-06-03 16:00,2014-10-28 08:00,2014-11-04 16:00,,PT_Normal,,,,,lK122TH5j0yyH+sw3Yn99g,rY9FTQc0T8Sjzz/j30XuyQ,,,N,0,0,,,2014-04-05 12:28,2014-04-05 13:21,admin,admin,
3256,142999,1749,35752,642,0,N,N,N,CP_Drtn,TT_Task,DT_FixedDUR2,TK_NotStart,P4-ST-B1-1000,Reinforcement for Verticals,4433,896,0,96,0,894.195796,894.195796,96,105187,0,105187,,,,2014-11-06 08:00,2014-11-19 16:00,,2014-06-05 08:00,2014-06-18 16:00,2014-06-05 08:00,2014-06-18 16:00,2014-06-05 08:00,2014-06-18 16:00,2014-11-06 08:00,2014-11-19 16:00,,PT_Normal,,,,,fiUxLIRe00a2ly5/h/vJFA,bG3AU+/vStiR9zmqMmw6Nw,,,N,0,0,,,2014-04-05 12:28,2014-04-05 13:21,admin,admin,
3257,143000,1749,35752,642,0,N,N,N,CP_Drtn,TT_Task,DT_FixedDUR2,TK_NotStart,P4-ST-B1-1020,FW for Verticals,4433,896,0,64,0,17711.99695,17711.99695,64,143716.648304,0,143716.648304,,,,2014-11-20 08:00,2014-11-29 16:00,,2014-06-21 08:00,2014-06-29 16:00,2014-06-21 08:00,2014-06-29 16:00,2014-06-21 08:00,2014-06-29 16:00,2014-11-20 08:00,2014-11-29 16:00,,PT_Normal,,,,,3hdeAjd15UGhCu6YBKPB8w,eAecEU8pRUCmR1L7LSrGuA,,,N,0,0,,,2014-04-05 12:28,2014-04-05 13:21,admin,admin,
3258,143001,1749,35752,642,0,N,N,N,CP_Drtn,TT_Task,DT_FixedDUR2,TK_NotStart,P4-ST-B1-1030,Concrete Verticals,4433,896,0,8,0,3190.813543,3190.813543,8,45190.599753,0,45190.599753,,,,2014-11-30 08:00,2014-11-30 16:00,,2014-06-30 08:00,2014-06-30 16:00,2014-06-30 08:00,2014-06-30 16:00,2014-06-30 08:00,2014-06-30 16:00,2014-11-30 08:00,2014-11-30 16:00,,PT_Normal,,,,,72LPqywb7k+PbTWzNgO92g,BS+rK04BQiyfVw2mfaVgFw,,,N,0,0,,,2014-04-05 12:28,2014-04-05 13:21,admin,admin,
3259,143002,1749,35752,642,0,N,N,N,CP_Drtn,TT_Task,DT_FixedDUR2,TK_NotStart,P4-ST-B1-1040,FW for Slab,4433,896,0,80,0,21904.201234,21904.201234,80,172731,0,172731,,,,2014-12-01 08:00,2014-12-11 16:00,,2014-07-01 10:00,2014-07-20 14:00,2014-07-01 10:00,2014-07-20 14:00,2014-07-01 10:00,2014-07-20 14:00,2014-12-01 08:00,2014-12-11 16:00,,PT_Normal,,,,,AubjK8G7M0m84VdjuhqA1w,7Q65sLUuSXePV7+3Ya+3Ew,,,N,0,0,,,2014-04-05 12:28,2014-04-05 13:21,admin,admin,
3260,143003,1749,35752,642,0,N,N,N,CP_Drtn,TT_Task,DT_FixedDUR2,TK_NotStart,P4-ST-B1-1060,Reinforcement for Slab,4433,896,0,80,0,2721.801743,2721.801743,80,335850.18888,0,335850.18888,,,,2014-12-13 08:00,2014-12-23 16:00,,2014-07-21 10:00,2014-08-06 16:00,2014-07-21 10:00,2014-08-06 16:00,2014-07-21 10:00,2014-08-06 16:00,2014-12-13 08:00,2014-12-23 16:00,,PT_Normal,,,,,MR3tSzQvjEmZsQEbgxc5Jg,HMnNgUtaRwWnuP1FNsWp/g,,,N,0,0,,,2014-04-05 12:28,2014-04-05 13:21,admin,admin,
3261,143004,1749,35752,642,0,N,N,N,CP_Drtn,TT_Task,DT_FixedDUR2,TK_NotStart,P4-ST-B1-1080,Concrete for Slab,4433,896,0,8,0,7087.214059,7087.214059,8,213813,0,213813,,,,2014-12-24 08:00,2014-12-24 16:00,,2014-08-07 08:00,2014-08-07 16:00,2014-08-07 08:00,2014-08-07 16:00,2014-08-07 08:00,2014-08-07 16:00,2014-12-24 08:00,2014-12-24 16:00,,PT_Normal,,,,,eUg85n4NPEKrnO0jIA0vvA,rjjnKSAyQlCBFToqsy+xOg,,,N,0,0,,,2014-04-05 12:28,2014-04-05 13:21,admin,admin,
3262,143005,1749,35752,642,0,N,N,N,CP_Drtn,TT_Task,DT_FixedDUR2,TK_NotStart,P4-ST-B1-1010,MEP Works in Vertical Element,,960,64,40,0,160,160,40,1803.546829,0,1803.546829,,,,2014-11-24 08:00,2014-11-29 16:00,,2014-06-14 08:00,2014-06-18 16:00,2014-06-14 08:00,2014-06-18 16:00,2014-06-14 08:00,2014-06-18 16:00,2014-11-24 08:00,2014-11-29 16:00,,PT_Normal,,,,,amG/DGe/XkWYOI+yJx18JA,SdF82ArDSGGB2TA+dUd5uw,,,N,0,0,,,2014-04-05 12:28,2014-04-05 13:21,admin,admin,
3263,143006,1749,35752,642,0,N,N,N,CP_Drtn,TT_Task,DT_FixedDUR2,TK_NotStart,P4-ST-B1-1070,MEP Works in Slab & Beams,,896,0,40,0,320,320,40,3354.018234,0,3354.018234,,,,2014-12-18 08:00,2014-12-23 16:00,,2014-08-02 08:00,2014-08-06 16:00,2014-08-02 08:00,2014-08-06 16:00,2014-08-02 08:00,2014-08-06 16:00,2014-12-18 08:00,2014-12-23 16:00,,PT_Normal,,,,,2gjpvYVeUUecM9rVbtleZA,CvIQmzbzQPqAFWJnnp5RFA,,,N,0,0,,,2014-04-05 12:28,2014-04-05 13:21,admin,admin,
3264,143007,1749,35795,642,0,N,N,N,CP_Drtn,TT_Task,DT_FixedDUR2,TK_NotStart,P4-ST-GF-1000,Reinforcement for Verticals,4433,2928,0,96,0,894.195796,894.195796,96,110187.675634,0,110187.675634,,,,2015-09-30 08:00,2015-10-11 16:00,,2014-08-09 08:00,2014-08-21 16:00,2014-08-09 08:00,2014-08-21 16:00,2014-08-09 08:00,2014-08-21 16:00,2015-09-30 08:00,2015-10-11 16:00,,PT_Normal,,,,,U8I8+5o8WUubJxbNZBScZQ,S5wOFyYKTwyJFOhbLiymIQ,,,N,0,0,,,2014-04-05 12:28,2014-04-05 13:21,admin,admin,
3265,143008,1749,35795,642,0,N,N,N,CP_Drtn,TT_Task,DT_FixedDUR2,TK_NotStart,P4-ST-GF-1010,FW for Verticals,4433,2928,0,64,0,17711.99695,17711.99695,64,143716.648304,0,143716.648304,,,,2015-10-12 08:00,2015-10-19 16:00,,2014-08-23 08:00,2014-08-31 16:00,2014-08-23 08:00,2014-08-31 16:00,2014-08-23 08:00,2014-08-31 16:00,2015-10-12 08:00,2015-10-19 16:00,,PT_Normal,,,,,epTvXZSrz06tWCK4QwvoJA,OvKk7Zq+QZKVNrJdtz0i8Q,,,N,0,0,,,2014-04-05 12:28,2014-04-05 13:21,admin,admin,
3266,143009,1749,35795,642,0,N,N,N,CP_Drtn,TT_Task,DT_FixedDUR2,TK_NotStart,P4-ST-GF-1020,Concrete Verticals,4433,2928,0,8,0,3190.813543,3190.813543,8,45190.599753,0,45190.599753,,,,2015-10-20 08:00,2015-10-20 16:00,,2014-09-01 08:00,2014-09-01 16:00,2014-09-01 08:00,2014-09-01 16:00,2014-09-01 08:00,2014-09-01 16:00,2015-10-20 08:00,2015-10-20 16:00,,PT_Normal,,,,,cbX2qLR1vEi2vSWIMxEqIA,sfYku/q8QQugWQIDrCyS3g,,,N,0,0,,,2014-04-05 12:28,2014-04-05 13:21,admin,admin,
3267,143010,1749,35795,642,0,N,N,N,CP_Drtn,TT_Task,DT_FixedDUR2,TK_NotStart,P4-ST-GF-1030,FW for Slab,4433,2928,0,80,0,21904.201234,21904.201234,80,177731.392672,0,177731.392672,,,,2015-10-21 08:00,2015-10-30 16:00,,2014-09-02 08:00,2014-09-13 16:00,2014-09-02 08:00,2014-09-13 16:00,2014-09-02 08:00,2014-09-13 16:00,2015-10-21 08:00,2015-10-30 16:00,,PT_Normal,,,,,U603TF/4m0CpEDMtnkkDFg,CbMT40kSQEu9i5J9HidBew,,,N,0,0,,,2014-04-05 12:28,2014-04-05 13:21,admin,admin,
3268,143011,1749,35795,642,0,N,N,N,CP_Drtn,TT_Task,DT_FixedDUR2,TK_NotStart,P4-ST-GF-1050,Reinforcement for Slab,4433,2928,0,80,0,2721.801743,2721.801743,80,335850.18888,0,335850.18888,,,,2015-10-31 08:00,2015-11-09 16:00,,2014-09-14 08:00,2014-09-24 16:00,2014-09-14 08:00,2014-09-24 16:00,2014-09-14 08:00,2014-09-24 16:00,2015-10-31 08:00,2015-11-09 16:00,,PT_Normal,,,,,mH/VfM6RpkisxXzNlyLkJA,NUewx/83RiCpg4AmZClvQQ,,,N,0,0,,,2014-04-05 12:28,2014-04-05 13:21,admin,admin,
3269,143012,1749,35795,642,0,N,N,N,CP_Drtn,TT_Task,DT_FixedDUR2,TK_NotStart,P4-ST-GF-1060,Concrete for Slab,4433,2928,0,8,0,7087.214059,7087.214059,8,218115.988054,0,218115.988054,,,,2015-11-10 08:00,2015-11-10 16:00,,2014-09-25 08:00,2014-09-25 16:00,2014-09-25 08:00,2014-09-25 16:00,2014-09-25 08:00,2014-09-25 16:00,2015-11-10 08:00,2015-11-10 16:00,,PT_Normal,,,,,/g4k/EWyzEyA/iyqHelOtQ,bwpmTvkkQGGs/NXUXYgiZQ,,,N,0,0,,,2014-04-05 12:28,2014-04-05 13:21,admin,admin,
3270,143013,1749,35775,642,0,N,N,N,CP_Drtn,TT_Task,DT_FixedDUR2,TK_NotStart,P5-ST-B2-1020,Formwork,4433,896,0,80,0,21658.073503,21658.073503,80,175734.370891,0,175734.370891,,,,2015-01-14 08:00,2015-01-25 16:00,,2014-08-26 08:00,2014-09-06 16:00,2014-08-26 08:00,2014-09-06 16:00,2014-08-26 08:00,2014-09-06 16:00,2015-01-14 08:00,2015-01-25 16:00,,PT_Normal,,,,,6g4ZDHamw06n6uQoucuXTA,KpCXrDg4QNiB20sKfy66Ww,,,N,0,0,,,2014-04-05 12:28,2014-04-05 13:21,admin,admin,
3271,143014,1749,35775,642,0,N,N,N,CP_Drtn,TT_Task,DT_FixedDUR2,TK_NotStart,P5-ST-B2-1010,Waterproofing,4433,896,0,80,0,182.774163,182.774163,80,10,0,10,,,,2014-12-31 08:00,2015-01-13 16:00,,2014-08-14 08:00,2014-08-25 16:00,2014-08-14 08:00,2014-08-25 16:00,2014-08-14 08:00,2014-08-25 16:00,2014-12-31 08:00,2015-01-13 16:00,,PT_Normal,,,,,gmbsRBE490O1Nh7iXxMHhw,GrAofR8GS9OkqkyQV0Fxgg,,,N,0,0,,,2014-04-05 12:28,2014-04-05 13:21,admin,admin,
3272,143015,1749,35775,642,0,N,N,N,CP_Drtn,TT_Task,DT_FixedDUR2,TK_NotStart,P5-ST-B2-1030,Reinforcement,4433,896,0,160,0,2768.750414,2768.750414,160,341648.37965,0,341648.37965,,,,2015-01-26 08:00,2015-02-17 16:00,,2014-09-07 08:00,2014-09-29 16:00,2014-09-07 08:00,2014-09-29 16:00,2014-09-07 08:00,2014-09-29 16:00,2015-01-26 08:00,2015-02-17 16:00,,PT_Normal,,,,,LEL4mdpt+Ey0f/jKbuQCIQ,YJTvgR9tR5ypM8RwYvXVwg,,,N,0,0,,,2014-04-05 12:28,2014-04-05 13:21,admin,admin,
3273,143016,1749,35775,642,0,N,N,N,CP_Drtn,TT_Task,DT_FixedDUR2,TK_NotStart,P5-ST-B2-1060,Concrete,4433,896,0,8,0,14424.884354,14424.884354,8,443936.629646,0,443936.629646,,,,2015-02-18 08:00,2015-02-18 16:00,,2014-09-30 08:00,2014-09-30 16:00,2014-09-30 08:00,2014-09-30 16:00,2014-09-30 08:00,2014-09-30 16:00,2015-02-18 08:00,2015-02-18 16:00,,PT_Normal,,,,,OoPj7366zU6iMLkgD4tjGg,BynkEMxPT8CQsR2MeoSyyg,,,N,0,0,,,2014-04-05 12:28,2014-04-05 13:21,admin,admin,
3274,143017,1749,35775,642,0,N,N,N,CP_Drtn,TT_Task,DT_FixedDUR2,TK_NotStart,P5-ST-B2-1000,Blinding,,896,0,40,0,0,0,40,5,0,5,,,,2014-12-25 08:00,2014-12-30 16:00,,2014-08-09 08:00,2014-08-13 16:00,2014-08-09 08:00,2014-08-13 16:00,2014-08-09 08:00,2014-08-13 16:00,2014-12-25 08:00,2014-12-30 16:00,,PT_Normal,,,,,cq1bl1h7bU+HaNZllPkN1w,xb0zFX4oT62IjB9B7X/mnw,,,N,0,0,,,2014-04-05 12:28,2014-04-05 13:21,admin,admin,
3275,143018,1749,35775,642,0,N,N,N,CP_Drtn,TT_Task,DT_FixedDUR2,TK_NotStart,P5-ST-B2-1040,MEP Works in Raft,4456,896,0,40,0,312,312,40,13056.000019,0,13056.000019,,,,2015-02-12 08:00,2015-02-17 16:00,,2014-09-24 08:00,2014-09-29 16:00,2014-09-24 08:00,2014-09-29 16:00,2014-09-24 08:00,2014-09-29 16:00,2015-02-12 08:00,2015-02-17 16:00,,PT_Normal,,,,,cK8wCfP55kiFbXzZXgvUGw,QXH2KviaSQuOI6Smmp1cKQ,,,N,0,0,,,2014-04-05 12:28,2014-04-05 13:21,admin,admin,
3276,143019,1749,35775,642,0,N,N,N,CP_Drtn,TT_Task,DT_FixedDUR2,TK_NotStart,P5-ST-B2-1050,Earthing Works,4480,896,0,40,0,408,408,40,8367.291801,0,8367.291801,,,,2015-02-12 08:00,2015-02-17 16:00,,2014-09-24 08:00,2014-09-29 16:00,2014-09-24 08:00,2014-09-29 16:00,2014-09-24 08:00,2014-09-29 16:00,2015-02-12 08:00,2015-02-17 16:00,,PT_Normal,,,,,qylvmhZyP0aBHI6VnFhmtQ,7abSihNCRZiyKXn3tHPV8w,,,N,0,0,,,2014-04-05 12:28,2014-04-05 13:21,admin,admin,
3277,143020,1749,35754,642,0,N,N,N,CP_Drtn,TT_Task,DT_FixedDUR2,TK_NotStart,P5-ST-B1-1010,Reinforcement for Verticals,4433,896,0,96,0,894.195796,894.195796,96,110187.675634,0,110187.675634,,,,2015-02-19 08:00,2015-03-04 16:00,,2014-10-01 08:00,2014-10-19 16:00,2014-10-01 08:00,2014-10-19 16:00,2014-10-01 08:00,2014-10-19 16:00,2015-02-19 08:00,2015-03-04 16:00,,PT_Normal,,,,,ufjwsT4t4ECfKGlFHsBv5g,uCA+lwkMRRC28DSZeP6Lbw,,,N,0,0,,,2014-04-05 12:28,2014-04-05 13:21,admin,admin,
3278,143021,1749,35754,642,0,N,N,N,CP_Drtn,TT_Task,DT_FixedDUR2,TK_NotStart,P5-ST-B1-1030,FW for Verticals,4433,896,0,64,0,17711.99695,17711.99695,64,143716.648304,0,143716.648304,,,,2015-03-05 08:00,2015-03-14 16:00,,2014-10-20 08:00,2014-10-29 16:00,2014-10-20 08:00,2014-10-29 16:00,2014-10-20 08:00,2014-10-29 16:00,2015-03-05 08:00,2015-03-14 16:00,,PT_Normal,,,,,9wC4F20ZxE23zMYQFSoIJw,/WPhQ9/8Q8+XzNqdfE9E1w,,,N,0,0,,,2014-04-05 12:28,2014-04-05 13:21,admin,admin,
3279,143022,1749,35754,642,0,N,N,N,CP_Drtn,TT_Task,DT_FixedDUR2,TK_NotStart,P5-ST-B1-1040,Concrete Verticals,4433,896,0,8,0,3190.813543,3190.813543,8,45190.599753,0,45190.599753,,,,2015-03-15 08:00,2015-03-15 16:00,,2014-10-30 08:00,2014-10-30 16:00,2014-10-30 08:00,2014-10-30 16:00,2014-10-30 08:00,2014-10-30 16:00,2015-03-15 08:00,2015-03-15 16:00,,PT_Normal,,,,,yuYlk0VKpU2ti8hNLUlClA,/g0GxGRiS96K9XYdOTif2A,,,N,0,0,,,2014-04-05 12:28,2014-04-05 13:21,admin,admin,
3280,143023,1749,35754,642,0,N,N,N,CP_Drtn,TT_Task,DT_FixedDUR2,TK_NotStart,P5-ST-B1-1050,FW for Slab,4433,896,0,80,0,21904.201234,21904.201234,80,177731.392672,0,177731.392672,,,,2015-03-16 08:00,2015-03-26 16:00,,2014-11-02 08:00,2014-11-13 16:00,2014-11-02 08:00,2014-11-13 16:00,2014-11-02 08:00,2014-11-13 16:00,2015-03-16 08:00,2015-03-26 16:00,,PT_Normal,,,,,1ut2dYWrlUS0V9zi+Zwafg,hUj2Z0EtQsK2w/T/AYxVAw,,,N,0,0,,,2014-04-05 12:28,2014-04-05 13:21,admin,admin,
3281,143024,1749,35754,642,0,N,N,N,CP_Drtn,TT_Task,DT_FixedDUR2,TK_NotStart,P5-ST-B1-1070,Reinforcement for Slab,4433,896,0,80,0,2721.801743,2721.801743,80,335850.18888,0,335850.18888,,,,2015-03-28 08:00,2015-04-07 16:00,,2014-11-15 08:00,2014-11-25 16:00,2014-11-15 08:00,2014-11-25 16:00,2014-11-15 08:00,2014-11-25 16:00,2015-03-28 08:00,2015-04-07 16:00,,PT_Normal,,,,,hK2FTuH3xky+Vt3YLR+2XQ,ySXFlyZcStufJhCbhepRCw,,,N,0,0,,,2014-04-05 12:28,2014-04-05 13:21,admin,admin,
3282,143025,1749,35754,642,0,N,N,N,CP_Drtn,TT_Task,DT_FixedDUR2,TK_NotStart,P5-ST-B1-1090,Concrete for Slab,4433,896,0,8,0,7087.214059,7087.214059,8,218115.988054,0,218115.988054,,,,2015-04-08 08:00,2015-04-08 16:00,,2014-11-26 08:00,2014-11-26 16:00,2014-11-26 08:00,2014-11-26 16:00,2014-11-26 08:00,2014-11-26 16:00,2015-04-08 08:00,2015-04-08 16:00,,PT_Normal,,,,,h5m+2cg1X06M9kbntEbDEQ,AClmmVAlS4KMjsfEuMrLxQ,,,N,0,0,,,2014-04-05 12:28,2014-04-05 13:21,admin,admin,
3283,143026,1749,35754,642,0,N,N,N,CP_Drtn,TT_Task,DT_FixedDUR2,TK_NotStart,P5-ST-B1-1020,MEP Works in Vertical Element,,960,64,40,0,160,160,40,1803.546829,0,1803.546829,,,,2015-03-09 08:00,2015-03-14 16:00,,2014-10-14 08:00,2014-10-19 16:00,2014-10-14 08:00,2014-10-19 16:00,2014-10-14 08:00,2014-10-19 16:00,2015-03-09 08:00,2015-03-14 16:00,,PT_Normal,,,,,pjPXFWPw5kWwLDPQXdQUtw,ltAA1xZaT5KGnVXCxKqK2w,,,N,0,0,,,2014-04-05 12:28,2014-04-05 13:21,admin,admin,
3284,143027,1749,35754,642,0,N,N,N,CP_Drtn,TT_Task,DT_FixedDUR2,TK_NotStart,P5-ST-B1-1080,MEP Works in Slab & Beams,,896,0,40,0,640,640,40,6703,0,6703,,,,2015-04-02 08:00,2015-04-07 16:00,,2014-11-20 08:00,2014-11-25 16:00,2014-11-20 08:00,2014-11-25 16:00,2014-11-20 08:00,2014-11-25 16:00,2015-04-02 08:00,2015-04-07 16:00,,PT_Normal,,,,,LsnpMyB26Ee5+tBs/9zfoA,9J8RJJpjRj2J7BMIQ+f8Tg,,,N,0,0,,,2014-04-05 12:28,2014-04-05 13:21,admin,admin,
3285,143028,1749,35823,642,0,N,N,N,CP_Drtn,TT_Task,DT_FixedDUR2,TK_NotStart,P5-ST-GF-1000,Reinforcement for Verticals,4433,2304,0,96,0,894.195796,894.195796,96,110187.675634,0,110187.675634,,,,2015-10-10 08:00,2015-10-21 16:00,,2014-11-27 08:00,2014-12-10 16:00,2014-11-27 08:00,2014-12-10 16:00,2014-11-27 08:00,2014-12-10 16:00,2015-10-10 08:00,2015-10-21 16:00,,PT_Normal,,,,,ijd3OV/b0kOFhgKU7P92vA,yeSuu7wdSt6qNjJoxVPB4w,,,N,0,0,,,2014-04-05 12:28,2014-04-05 13:21,admin,admin,
3286,143029,1749,35823,642,0,N,N,N,CP_Drtn,TT_Task,DT_FixedDUR2,TK_NotStart,P5-ST-GF-1010,FW for Verticals,4433,2304,0,64,0,17711.99695,17711.99695,64,143716.648304,0,143716.648304,,,,2015-10-22 08:00,2015-10-29 16:00,,2014-12-11 08:00,2014-12-20 16:00,2014-12-11 08:00,2014-12-20 16:00,2014-12-11 08:00,2014-12-20 16:00,2015-10-22 08:00,2015-10-29 16:00,,PT_Normal,,,,,J+NFKJAjsECB9CZ+oodOAw,2KIZlP5TQdGru/ve3oJZDg,,,N,0,0,,,2014-04-05 12:28,2014-04-05 13:21,admin,admin,
3287,143030,1749,35823,642,0,N,N,N,CP_Drtn,TT_Task,DT_FixedDUR2,TK_NotStart,P5-ST-GF-1020,Concrete Verticals,4433,2304,0,8,0,3190.813543,3190.813543,8,45190.599753,0,45190.599753,,,,2015-10-30 08:00,2015-10-30 16:00,,2014-12-21 08:00,2014-12-21 16:00,2014-12-21 08:00,2014-12-21 16:00,2014-12-21 08:00,2014-12-21 16:00,2015-10-30 08:00,2015-10-30 16:00,,PT_Normal,,,,,32VqksUj3k6el37WMEBglg,YyCgUYFDQUKqi4VLYYpB0g,,,N,0,0,,,2014-04-05 12:28,2014-04-05 13:21,admin,admin,
3288,143031,1749,35823,642,0,N,N,N,CP_Drtn,TT_Task,DT_FixedDUR2,TK_NotStart,P5-ST-GF-1030,FW for Slab,4433,2304,0,80,0,21904.201234,21904.201234,80,177731.392672,0,177731.392672,,,,2015-10-31 08:00,2015-11-09 16:00,,2014-12-22 08:00,2015-01-04 16:00,2014-12-22 08:00,2015-01-04 16:00,2014-12-22 08:00,2015-01-04 16:00,2015-10-31 08:00,2015-11-09 16:00,,PT_Normal,,,,,AEgh6uQ/XEKKte1wHpeHHw,rXz76iwkSA+k82+v/P9jeQ,,,N,0,0,,,2014-04-05 12:28,2014-04-05 13:21,admin,admin,
3289,143032,1749,35823,642,0,N,N,N,CP_Drtn,TT_Task,DT_FixedDUR2,TK_NotStart,P5-ST-GF-1050,Reinforcement for Slab,4433,2304,0,80,0,2721.801743,2721.801743,80,335850.18888,0,335850.18888,,,,2015-11-10 08:00,2015-11-19 16:00,,2015-01-05 08:00,2015-01-15 16:00,2015-01-05 08:00,2015-01-15 16:00,2015-01-05 08:00,2015-01-15 16:00,2015-11-10 08:00,2015-11-19 16:00,,PT_Normal,,,,,J6rK7u6aLk2gc+FIuUCwUw,EppIowVdSqm1qXUcB2m2OA,,,N,0,0,,,2014-04-05 12:28,2014-04-05 13:21,admin,admin,
3290,143033,1749,35823,642,0,N,N,N,CP_Drtn,TT_Task,DT_FixedDUR2,TK_NotStart,P5-ST-GF-1060,Concrete for Slab,4433,2304,0,8,0,7087.214059,7087.214059,8,218115.988054,0,218115.988054,,,,2015-11-20 08:00,2015-11-20 16:00,,2015-01-17 08:00,2015-01-17 16:00,2015-01-17 08:00,2015-01-17 16:00,2015-01-17 08:00,2015-01-17 16:00,2015-11-20 08:00,2015-11-20 16:00,,PT_Normal,,,,,CXjlbWKEhkqHsRxoYNE4Gw,92lKkb7HQeOJJFchRqD7tQ,,,N,0,0,,,2014-04-05 12:28,2014-04-05 13:21,admin,admin,
3291,143034,1749,35691,642,0,N,N,N,CP_Drtn,TT_Task,DT_FixedDUR2,TK_NotStart,P6-ST-B2-1020,Formwork,4433,896,0,80,0,21658.073503,21658.073503,80,175734.370891,0,175734.370891,,,,2015-04-27 08:00,2015-05-07 16:00,,2014-12-15 08:00,2014-12-25 16:00,2014-12-15 08:00,2014-12-25 16:00,2014-12-15 08:00,2014-12-25 16:00,2015-04-27 08:00,2015-05-07 16:00,,PT_Normal,,,,,J/S/Pw7uJkqBYT6Q9Umtag,Doho65MqS06RLEWrmm05FA,,,N,0,0,,,2014-04-05 12:28,2014-04-05 13:21,admin,admin,
3292,143035,1749,35691,642,0,N,N,N,CP_Drtn,TT_Task,DT_FixedDUR2,TK_NotStart,P6-ST-B2-1010,Waterproofing,4433,896,0,80,0,182.774163,182.774163,80,10,0,10,,,,2015-04-15 08:00,2015-04-26 16:00,,2014-12-03 08:00,2014-12-14 16:00,2014-12-03 08:00,2014-12-14 16:00,2014-12-03 08:00,2014-12-14 16:00,2015-04-15 08:00,2015-04-26 16:00,,PT_Normal,,,,,aATNOoiXSEy3k49I/3X26A,Q7FH+YdXRGuuCaQY49ouBA,,,N,0,0,,,2014-04-05 12:28,2014-04-05 13:21,admin,admin,
3293,143036,1749,35691,642,0,N,N,N,CP_Drtn,TT_Task,DT_FixedDUR2,TK_NotStart,P6-ST-B2-1030,Reinforcement,4433,896,0,160,0,2768.750414,2768.750414,160,341648.37965,0,341648.37965,,,,2015-05-09 08:00,2015-05-31 16:00,,2014-12-27 08:00,2015-01-20 16:00,2014-12-27 08:00,2015-01-20 16:00,2014-12-27 08:00,2015-01-20 16:00,2015-05-09 08:00,2015-05-31 16:00,,PT_Normal,,,,,B0FDzQpTvUeaFMImOzICvw,PEJ3vOIHR0SrKwK50CoxrQ,,,N,0,0,,,2014-04-05 12:28,2014-04-05 13:21,admin,admin,
3294,143037,1749,35691,642,0,N,N,N,CP_Drtn,TT_Task,DT_FixedDUR2,TK_NotStart,P6-ST-B2-1060,Concrete,4433,896,0,8,0,14424.884354,14424.884354,8,443936.629646,0,443936.629646,,,,2015-06-01 08:00,2015-06-01 16:00,,2015-01-21 08:00,2015-01-21 16:00,2015-01-21 08:00,2015-01-21 16:00,2015-01-21 08:00,2015-01-21 16:00,2015-06-01 08:00,2015-06-01 16:00,,PT_Normal,,,,,ZKeWrQRCBE+oaerHOR54Ew,VFg8tr3TSEWUxle3eCpTww,,,N,0,0,,,2014-04-05 12:28,2014-04-05 13:21,admin,admin,
3295,143038,1749,35691,642,0,N,N,N,CP_Drtn,TT_Task,DT_FixedDUR2,TK_NotStart,P6-ST-B2-1000,Blinding,,896,0,40,0,0,0,40,5,0,5,,,,2015-04-09 08:00,2015-04-14 16:00,,2014-11-27 08:00,2014-12-02 16:00,2014-11-27 08:00,2014-12-02 16:00,2014-11-27 08:00,2014-12-02 16:00,2015-04-09 08:00,2015-04-14 16:00,,PT_Normal,,,,,8OrELZEGLUOaXk7SlkNfsg,ahGmRQWSSAOcRvGtmUZBjA,,,N,0,0,,,2014-04-05 12:28,2014-04-05 13:21,admin,admin,
3296,143039,1749,35691,642,0,N,N,N,CP_Drtn,TT_Task,DT_FixedDUR2,TK_NotStart,P6-ST-B2-1040,MEP Works in Raft,4456,896,0,40,0,312,312,40,13056.000019,0,13056.000019,,,,2015-05-26 08:00,2015-05-31 16:00,,2015-01-15 08:00,2015-01-20 16:00,2015-01-15 08:00,2015-01-20 16:00,2015-01-15 08:00,2015-01-20 16:00,2015-05-26 08:00,2015-05-31 16:00,,PT_Normal,,,,,BT4m1tDe+E255EmvP3UXyg,dDryurz7Shm4XAXuKJxhpw,,,N,0,0,,,2014-04-05 12:28,2014-04-05 13:21,admin,admin,
3297,143040,1749,35691,642,0,N,N,N,CP_Drtn,TT_Task,DT_FixedDUR2,TK_NotStart,P6-ST-B2-1050,Earthing Works,4480,896,0,40,0,408,408,40,8367.291801,0,8367.291801,,,,2015-05-26 08:00,2015-05-31 16:00,,2015-01-15 08:00,2015-01-20 16:00,2015-01-15 08:00,2015-01-20 16:00,2015-01-15 08:00,2015-01-20 16:00,2015-05-26 08:00,2015-05-31 16:00,,PT_Normal,,,,,fQJNqbFylU6UDW/knHjvIA,msM1EehDTNyz+iSX77+djw,,,N,0,0,,,2014-04-05 12:28,2014-04-05 13:21,admin,admin,
3298,143041,1749,35725,642,0,N,N,N,CP_Drtn,TT_Task,DT_FixedDUR2,TK_NotStart,P6-ST-B1-1000,Reinforcement for Verticals,4433,896,0,96,0,894.195796,894.195796,96,110187.675634,0,110187.675634,,,,2015-06-02 08:00,2015-06-13 16:00,,2015-01-22 08:00,2015-02-04 16:00,2015-01-22 08:00,2015-02-04 16:00,2015-01-22 08:00,2015-02-04 16:00,2015-06-02 08:00,2015-06-13 16:00,,PT_Normal,,,,,OIHt9XJBf0qvi2NJFj+GOA,RNzvB2QCSxKGgqZVT8kMlA,,,N,0,0,,,2014-04-05 12:28,2014-04-05 13:21,admin,admin,
3299,143042,1749,35725,642,0,N,N,N,CP_Drtn,TT_Task,DT_FixedDUR2,TK_NotStart,P6-ST-B1-1020,FW for Verticals,4433,896,0,64,0,17711.99695,17711.99695,64,143716.648304,0,143716.648304,,,,2015-06-14 08:00,2015-06-21 16:00,,2015-02-05 08:00,2015-02-14 16:00,2015-02-05 08:00,2015-02-14 16:00,2015-02-05 08:00,2015-02-14 16:00,2015-06-14 08:00,2015-06-21 16:00,,PT_Normal,,,,,zD4SoG3I4k+WeoY8cM8f5Q,InWqqvx9T76GlJvKcGO3HA,,,N,0,0,,,2014-04-05 12:28,2014-04-05 13:21,admin,admin,
3300,143043,1749,35725,642,0,N,N,N,CP_Drtn,TT_Task,DT_FixedDUR2,TK_NotStart,P6-ST-B1-1030,Concrete Verticals,4433,896,0,8,0,3190.813543,3190.813543,8,45190.599753,0,45190.599753,,,,2015-06-22 08:00,2015-06-22 16:00,,2015-02-15 08:00,2015-02-15 16:00,2015-02-15 08:00,2015-02-15 16:00,2015-02-15 08:00,2015-02-15 16:00,2015-06-22 08:00,2015-06-22 16:00,,PT_Normal,,,,,8htDxqAsG0KUrGZCnuz4pQ,51MZz839R/CUj8rOw14m8w,,,N,0,0,,,2014-04-05 12:28,2014-04-05 13:21,admin,admin,
3301,143044,1749,35725,642,0,N,N,N,CP_Drtn,TT_Task,DT_FixedDUR2,TK_NotStart,P6-ST-B1-1040,FW for Slab,4433,896,0,80,0,21904.201234,21904.201234,80,177731.392672,0,177731.392672,,,,2015-06-23 08:00,2015-07-02 16:00,,2015-02-16 08:00,2015-02-26 16:00,2015-02-16 08:00,2015-02-26 16:00,2015-02-16 08:00,2015-02-26 16:00,2015-06-23 08:00,2015-07-02 16:00,,PT_Normal,,,,,99AsVn8KWUisPqaBUgOWYQ,/CFwkvOlSxWQclDbMdGpbw,,,N,0,0,,,2014-04-05 12:28,2014-04-05 13:21,admin,admin,
3302,143045,1749,35725,642,0,N,N,N,CP_Drtn,TT_Task,DT_FixedDUR2,TK_NotStart,P6-ST-B1-1060,Reinforcement for Slab,4433,896,0,80,0,2721.801743,2721.801743,80,335850.18888,0,335850.18888,,,,2015-07-03 08:00,2015-07-12 16:00,,2015-02-28 08:00,2015-03-10 16:00,2015-02-28 08:00,2015-03-10 16:00,2015-02-28 08:00,2015-03-10 16:00,2015-07-03 08:00,2015-07-12 16:00,,PT_Normal,,,,,/TW2a9Ux6UWRoLhj8NuJhQ,UtO4kASFSJ6FDZPX3ZiNkA,,,N,0,0,,,2014-04-05 12:28,2014-04-05 13:21,admin,admin,
3303,143046,1749,35725,642,0,N,N,N,CP_Drtn,TT_Task,DT_FixedDUR2,TK_NotStart,P6-ST-B1-1080,Concrete for Slab,4433,896,0,8,0,7087.214059,7087.214059,8,218115.988054,0,218115.988054,,,,2015-07-13 08:00,2015-07-13 16:00,,2015-03-11 08:00,2015-03-11 16:00,2015-03-11 08:00,2015-03-11 16:00,2015-03-11 08:00,2015-03-11 16:00,2015-07-13 08:00,2015-07-13 16:00,,PT_Normal,,,,,bb8CY140HUGLD2u08Gzf8A,jrepkahSRKWOcH/C+wfW4Q,,,N,0,0,,,2014-04-05 12:28,2014-04-05 13:21,admin,admin,
3304,143047,1749,35725,642,0,N,N,N,CP_Drtn,TT_Task,DT_FixedDUR2,TK_NotStart,P6-ST-B1-1010,MEP Works in Vertical Element,,960,64,40,0,160,160,40,1803.546829,0,1803.546829,,,,2015-06-17 08:00,2015-06-21 16:00,,2015-01-31 08:00,2015-02-04 16:00,2015-01-31 08:00,2015-02-04 16:00,2015-01-31 08:00,2015-02-04 16:00,2015-06-17 08:00,2015-06-21 16:00,,PT_Normal,,,,,HqvHlerakEq4zcEqwXcLow,YE6eCAITSKmDnifNWLb+Dg,,,N,0,0,,,2014-04-05 12:28,2014-04-05 13:21,admin,admin,
3305,143048,1749,35725,642,0,N,N,N,CP_Drtn,TT_Task,DT_FixedDUR2,TK_NotStart,P6-ST-B1-1070,MEP Works in Slab & Beams,,896,0,40,0,320,320,40,3354.018234,0,3354.018234,,,,2015-07-08 08:00,2015-07-12 16:00,,2015-03-05 08:00,2015-03-10 16:00,2015-03-05 08:00,2015-03-10 16:00,2015-03-05 08:00,2015-03-10 16:00,2015-07-08 08:00,2015-07-12 16:00,,PT_Normal,,,,,KFUXC7dOL0eGq2o8yHIFXg,psBeoU/rTYmZme4Udve/cA,,,N,0,0,,,2014-04-05 12:28,2014-04-05 13:21,admin,admin,
3306,143049,1749,35864,642,0,N,N,N,CP_Drtn,TT_Task,DT_FixedDUR2,TK_NotStart,P6-ST-GF-1000,Reinforcement for Verticals,4433,1232,0,96,0,894.195796,894.195796,96,110187.675634,0,110187.675634,,,,2015-08-25 08:00,2015-09-05 16:00,,2015-03-12 08:00,2015-03-25 16:00,2015-03-12 08:00,2015-03-25 16:00,2015-03-12 08:00,2015-03-25 16:00,2015-08-25 08:00,2015-09-05 16:00,,PT_Normal,,,,,J+UfMwt8B0igWtkc0vfCLg,VithGy1iSwqUCtiARZeWsw,,,N,0,0,,,2014-04-05 12:28,2014-04-05 13:21,admin,admin,
3307,143050,1749,35864,642,0,N,N,N,CP_Drtn,TT_Task,DT_FixedDUR2,TK_NotStart,P6-ST-GF-1010,FW for Verticals,4433,1232,0,64,0,17711.99695,17711.99695,64,143716.648304,0,143716.648304,,,,2015-09-06 08:00,2015-09-13 16:00,,2015-03-26 08:00,2015-04-04 16:00,2015-03-26 08:00,2015-04-04 16:00,2015-03-26 08:00,2015-04-04 16:00,2015-09-06 08:00,2015-09-13 16:00,,PT_Normal,,,,,6OxKRpr94Ue0SVW+8RXZ1Q,sIkj52vhTg2h1mfQ8Yq1zQ,,,N,0,0,,,2014-04-05 12:28,2014-04-05 13:21,admin,admin,
3308,143051,1749,35864,642,0,N,N,N,CP_Drtn,TT_Task,DT_FixedDUR2,TK_NotStart,P6-ST-GF-1020,Concrete Verticals,4433,1232,0,8,0,3190.813543,3190.813543,8,45190.599753,0,45190.599753,,,,2015-09-14 08:00,2015-09-14 16:00,,2015-04-05 08:00,2015-04-05 16:00,2015-04-05 08:00,2015-04-05 16:00,2015-04-05 08:00,2015-04-05 16:00,2015-09-14 08:00,2015-09-14 16:00,,PT_Normal,,,,,QrfovkA6tEeUkRS7rLuwTQ,uEWQ5EsdQk2eRvyfahmrRw,,,N,0,0,,,2014-04-05 12:28,2014-04-05 13:21,admin,admin,
3309,143052,1749,35864,642,0,N,N,N,CP_Drtn,TT_Task,DT_FixedDUR2,TK_NotStart,P6-ST-GF-1030,FW for Slab,4433,1232,0,80,0,21904.201234,21904.201234,80,177731.392672,0,177731.392672,,,,2015-09-15 08:00,2015-09-24 16:00,,2015-04-06 08:00,2015-04-16 16:00,2015-04-06 08:00,2015-04-16 16:00,2015-04-06 08:00,2015-04-16 16:00,2015-09-15 08:00,2015-09-24 16:00,,PT_Normal,,,,,hFxHH80voEi6KAzbo27fhQ,AIxPncv+QJ27P7cPgiZ14Q,,,N,0,0,,,2014-04-05 12:28,2014-04-05 13:21,admin,admin,
3310,143053,1749,35864,642,0,N,N,N,CP_Drtn,TT_Task,DT_FixedDUR2,TK_NotStart,P6-ST-GF-1050,Reinforcement for Slab,4433,1232,0,80,0,2721.801743,2721.801743,80,335850.18888,0,335850.18888,,,,2015-09-25 08:00,2015-10-04 16:00,,2015-04-18 08:00,2015-04-28 16:00,2015-04-18 08:00,2015-04-28 16:00,2015-04-18 08:00,2015-04-28 16:00,2015-09-25 08:00,2015-10-04 16:00,,PT_Normal,,,,,p8njuwfzzEyJMctAQh+slw,PNat02TITVq6Oq5hnshJ3g,,,N,0,0,,,2014-04-05 12:28,2014-04-05 13:21,admin,admin,
3311,143054,1749,35864,642,0,N,N,N,CP_Drtn,TT_Task,DT_FixedDUR2,TK_NotStart,P6-ST-GF-1060,Concrete for Slab,4433,1232,0,8,0,7087.214059,7087.214059,8,218115.988054,0,218115.988054,,,,2015-10-05 08:00,2015-10-05 16:00,,2015-04-29 08:00,2015-04-29 16:00,2015-04-29 08:00,2015-04-29 16:00,2015-04-29 08:00,2015-04-29 16:00,2015-10-05 08:00,2015-10-05 16:00,,PT_Normal,,,,,+iDONiNYS0qZ6PqJ/fSL0g,GX4LpB7NQzu51Jm+Atr/9w,,,N,0,0,,,2014-04-05 12:28,2014-04-05 13:21,admin,admin,
3312,143055,1749,35915,642,0,N,N,N,CP_Drtn,TT_Task,DT_FixedDUR2,TK_NotStart,P7-ST-B2-1020,Formwork,4433,896,0,80,0,21658.073503,21658.073503,80,175734.370891,0,175734.370891,,,,2015-07-29 08:00,2015-08-07 16:00,,2015-03-30 08:00,2015-04-09 16:00,2015-03-30 08:00,2015-04-09 16:00,2015-03-30 08:00,2015-04-09 16:00,2015-07-29 08:00,2015-08-07 16:00,,PT_Normal,,,,,WfDqqMxd40GPwNsBWmJj8A,HAFwVMbuTW++hJ435gjy3w,,,N,0,0,,,2014-04-05 12:28,2014-04-05 13:21,admin,admin,
3313,143056,1749,35915,642,0,N,N,N,CP_Drtn,TT_Task,DT_FixedDUR2,TK_NotStart,P7-ST-B2-1010,Waterproofing,4433,896,0,80,0,182.774163,182.774163,80,10,0,10,,,,2015-07-19 08:00,2015-07-28 16:00,,2015-03-18 08:00,2015-03-29 16:00,2015-03-18 08:00,2015-03-29 16:00,2015-03-18 08:00,2015-03-29 16:00,2015-07-19 08:00,2015-07-28 16:00,,PT_Normal,,,,,6Kf4CLMcKEOA7A73Lo9aQQ,mFVUEbVvTuif/S4yNAeklg,,,N,0,0,,,2014-04-05 12:28,2014-04-05 13:21,admin,admin,
3314,143057,1749,35915,642,0,N,N,N,CP_Drtn,TT_Task,DT_FixedDUR2,TK_NotStart,P7-ST-B2-1030,Reinforcement,4433,896,0,160,0,2768.750414,2768.750414,160,341648.37965,0,341648.37965,,,,2015-08-08 08:00,2015-08-27 16:00,,2015-04-11 08:00,2015-05-03 16:00,2015-04-11 08:00,2015-05-03 16:00,2015-04-11 08:00,2015-05-03 16:00,2015-08-08 08:00,2015-08-27 16:00,,PT_Normal,,,,,HwADatE2DEu55Fu/77eb8A,xbVoM0zJSQ+R1IxgjXoAaQ,,,N,0,0,,,2014-04-05 12:28,2014-04-05 13:21,admin,admin,
3315,143058,1749,35915,642,0,N,N,N,CP_Drtn,TT_Task,DT_FixedDUR2,TK_NotStart,P7-ST-B2-1060,Concrete,4433,896,0,8,0,14424.884354,14424.884354,8,443936.629646,0,443936.629646,,,,2015-08-28 08:00,2015-08-28 16:00,,2015-05-04 08:00,2015-05-04 16:00,2015-05-04 08:00,2015-05-04 16:00,2015-05-04 08:00,2015-05-04 16:00,2015-08-28 08:00,2015-08-28 16:00,,PT_Normal,,,,,kD8I0feqDEeUHm5Wnw0ujw,xUAPDDcGR0OSeVRksg0BIQ,,,N,0,0,,,2014-04-05 12:28,2014-04-05 13:21,admin,admin,
3316,143059,1749,35915,642,0,N,N,N,CP_Drtn,TT_Task,DT_FixedDUR2,TK_NotStart,P7-ST-B2-1000,Blinding,,896,0,40,0,0,0,40,5,0,5,,,,2015-07-14 08:00,2015-07-18 16:00,,2015-03-12 08:00,2015-03-17 16:00,2015-03-12 08:00,2015-03-17 16:00,2015-03-12 08:00,2015-03-17 16:00,2015-07-14 08:00,2015-07-18 16:00,,PT_Normal,,,,,t3qfoTH+00mlgL5RQb72qQ,HIGSp/tBRlCscaFBtwS3eQ,,,N,0,0,,,2014-04-05 12:28,2014-04-05 13:21,admin,admin,
3317,143060,1749,35915,642,0,N,N,N,CP_Drtn,TT_Task,DT_FixedDUR2,TK_NotStart,P7-ST-B2-1040,MEP Works in Raft,4456,896,0,40,0,312,312,40,13056.000019,0,13056.000019,,,,2015-08-23 08:00,2015-08-27 16:00,,2015-04-28 08:00,2015-05-03 16:00,2015-04-28 08:00,2015-05-03 16:00,2015-04-28 08:00,2015-05-03 16:00,2015-08-23 08:00,2015-08-27 16:00,,PT_Normal,,,,,U+wfURWwMEODvyuipzml4A,qRTYkF6SSmycpWTncHXVUw,,,N,0,0,,,2014-04-05 12:28,2014-04-05 13:21,admin,admin,
3318,143061,1749,35915,642,0,N,N,N,CP_Drtn,TT_Task,DT_FixedDUR2,TK_NotStart,P7-ST-B2-1050,Earthing Works,4480,896,0,40,0,408,408,40,8367.291801,0,8367.291801,,,,2015-08-23 08:00,2015-08-27 16:00,,2015-04-28 08:00,2015-05-03 16:00,2015-04-28 08:00,2015-05-03 16:00,2015-04-28 08:00,2015-05-03 16:00,2015-08-23 08:00,2015-08-27 16:00,,PT_Normal,,,,,ipUTRV0YjEKm6cDZEfOm4Q,GY3xtk2IQd6tr0DtoJunkg,,,N,0,0,,,2014-04-05 12:28,2014-04-05 13:21,admin,admin,
3319,143062,1749,35849,642,0,N,N,N,CP_Drtn,TT_Task,DT_FixedDUR2,TK_NotStart,P7-ST-B1-1000,Reinforcement for Verticals,4433,896,0,96,0,894.195796,894.195796,96,110187.675634,0,110187.675634,,,,2015-08-29 08:00,2015-09-09 16:00,,2015-05-05 08:00,2015-05-18 16:00,2015-05-05 08:00,2015-05-18 16:00,2015-05-05 08:00,2015-05-18 16:00,2015-08-29 08:00,2015-09-09 16:00,,PT_Normal,,,,,1S2oLVl/406BTLMW7bjOtA,Ri3e9xCoQTis4oHpiL5KAQ,,,N,0,0,,,2014-04-05 12:28,2014-04-05 13:21,admin,admin,
3320,143063,1749,35849,642,0,N,N,N,CP_Drtn,TT_Task,DT_FixedDUR2,TK_NotStart,P7-ST-B1-1020,FW for Verticals,4433,896,0,64,0,17711.99695,17711.99695,64,143716.648304,0,143716.648304,,,,2015-09-10 08:00,2015-09-17 16:00,,2015-05-19 08:00,2015-05-27 16:00,2015-05-19 08:00,2015-05-27 16:00,2015-05-19 08:00,2015-05-27 16:00,2015-09-10 08:00,2015-09-17 16:00,,PT_Normal,,,,,/JChNkGntUuiysH6quI4zA,ePqdZcckQ3WPioHL0X1V/g,,,N,0,0,,,2014-04-05 12:28,2014-04-05 13:21,admin,admin,
3321,143064,1749,35849,642,0,N,N,N,CP_Drtn,TT_Task,DT_FixedDUR2,TK_NotStart,P7-ST-B1-1030,Concrete Verticals,4433,896,0,8,0,3190.813543,3190.813543,8,45190.599753,0,45190.599753,,,,2015-09-18 08:00,2015-09-18 16:00,,2015-05-28 08:00,2015-05-28 16:00,2015-05-28 08:00,2015-05-28 16:00,2015-05-28 08:00,2015-05-28 16:00,2015-09-18 08:00,2015-09-18 16:00,,PT_Normal,,,,,AqP4dSkEO0WnM7LW91na1A,kYDnuP0/SBCFM2D0k/uvsw,,,N,0,0,,,2014-04-05 12:28,2014-04-05 13:21,admin,admin,
3322,143065,1749,35849,642,0,N,N,N,CP_Drtn,TT_Task,DT_FixedDUR2,TK_NotStart,P7-ST-B1-1040,FW for Slab,4433,896,0,80,0,21904.201234,21904.201234,80,177731.392672,0,177731.392672,,,,2015-09-19 08:00,2015-09-28 16:00,,2015-05-30 08:00,2015-06-08 16:00,2015-05-30 08:00,2015-06-08 16:00,2015-05-30 08:00,2015-06-08 16:00,2015-09-19 08:00,2015-09-28 16:00,,PT_Normal,,,,,A81za0a6X0Wq3DtKuSoBTQ,ih6K2iAPQ6mxVeAdaVHWzg,,,N,0,0,,,2014-04-05 12:28,2014-04-05 13:21,admin,admin,
3323,143066,1749,35849,642,0,N,N,N,CP_Drtn,TT_Task,DT_FixedDUR2,TK_NotStart,P7-ST-B1-1060,Reinforcement for Slab,4433,896,0,80,0,2721.801743,2721.801743,80,335850.18888,0,335850.18888,,,,2015-09-29 08:00,2015-10-08 16:00,,2015-06-09 08:00,2015-06-18 16:00,2015-06-09 08:00,2015-06-18 16:00,2015-06-09 08:00,2015-06-18 16:00,2015-09-29 08:00,2015-10-08 16:00,,PT_Normal,,,,,zOntSnmZqk+hRgey0Ddq1w,l9vT3BpIRJGX2wFcTnyjCA,,,N,0,0,,,2014-04-05 12:28,2014-04-05 13:21,admin,admin,
3324,143067,1749,35849,642,0,N,N,N,CP_Drtn,TT_Task,DT_FixedDUR2,TK_NotStart,P7-ST-B1-1080,Concrete for Slab,4433,896,0,8,0,7087.214059,7087.214059,8,218115.988054,0,218115.988054,,,,2015-10-09 08:00,2015-10-09 16:00,,2015-06-19 08:00,2015-06-19 16:00,2015-06-19 08:00,2015-06-19 16:00,2015-06-19 08:00,2015-06-19 16:00,2015-10-09 08:00,2015-10-09 16:00,,PT_Normal,,,,,kugVAO9ZF0ifKzijREPrNQ,ks74mC1NTcSkYvshgUG1dg,,,N,0,0,,,2014-04-05 12:28,2014-04-05 13:21,admin,admin,
3325,143068,1749,35849,642,0,N,N,N,CP_Drtn,TT_Task,DT_FixedDUR2,TK_NotStart,P7-ST-B1-1010,MEP Works in Vertical Element,,960,64,40,0,160,160,40,1803.546829,0,1803.546829,,,,2015-09-13 08:00,2015-09-17 16:00,,2015-05-13 08:00,2015-05-18 16:00,2015-05-13 08:00,2015-05-18 16:00,2015-05-13 08:00,2015-05-18 16:00,2015-09-13 08:00,2015-09-17 16:00,,PT_Normal,,,,,aMtfm+4xqEC9IaLXMO50Cg,sZMGGOzoRhGXjmHuwP0HRA,,,N,0,0,,,2014-04-05 12:28,2014-04-05 13:21,admin,admin,
3326,143069,1749,35849,642,0,N,N,N,CP_Drtn,TT_Task,DT_FixedDUR2,TK_NotStart,P7-ST-B1-1070,MEP Works in Slab & Beams,,896,0,40,0,320,320,40,3354.018234,0,3354.018234,,,,2015-10-04 08:00,2015-10-08 16:00,,2015-06-14 08:00,2015-06-18 16:00,2015-06-14 08:00,2015-06-18 16:00,2015-06-14 08:00,2015-06-18 16:00,2015-10-04 08:00,2015-10-08 16:00,,PT_Normal,,,,,IBBUhPpNUk+yuIVo21LYKA,MS2Mld3zS+iHBCpTYzD14g,,,N,0,0,,,2014-04-05 12:28,2014-04-05 13:21,admin,admin,
3327,143070,1749,35852,642,0,N,N,N,CP_Drtn,TT_Task,DT_FixedDUR2,TK_NotStart,P7-ST-GF-1000,Reinforcement for Verticals,4433,896,0,96,0,894.195796,894.195796,96,110187.675634,0,110187.675634,,,,2015-10-10 08:00,2015-10-21 16:00,,2015-06-20 08:00,2015-07-01 16:00,2015-06-20 08:00,2015-07-01 16:00,2015-06-20 08:00,2015-07-01 16:00,2015-10-10 08:00,2015-10-21 16:00,,PT_Normal,,,,,8V2Y8YERE0G7wiYb6Q1wQQ,YhZHMqP/RGOkpoY0OeI9pA,,,N,0,0,,,2014-04-05 12:28,2014-04-05 13:21,admin,admin,
3328,143071,1749,35852,642,0,N,N,N,CP_Drtn,TT_Task,DT_FixedDUR2,TK_NotStart,P7-ST-GF-1010,FW for Verticals,4433,896,0,64,0,17711.99695,17711.99695,64,143716.648304,0,143716.648304,,,,2015-10-22 08:00,2015-10-29 16:00,,2015-07-02 08:00,2015-07-09 16:00,2015-07-02 08:00,2015-07-09 16:00,2015-07-02 08:00,2015-07-09 16:00,2015-10-22 08:00,2015-10-29 16:00,,PT_Normal,,,,,wIYrfaEyAkSnqSqgJheuYw,3Pi6kUtbTtiQLAV7y8HDtg,,,N,0,0,,,2014-04-05 12:28,2014-04-05 13:21,admin,admin,
3329,143072,1749,35852,642,0,N,N,N,CP_Drtn,TT_Task,DT_FixedDUR2,TK_NotStart,P7-ST-GF-1020,Concrete Verticals,4433,896,0,8,0,3190.813543,3190.813543,8,45190.599753,0,45190.599753,,,,2015-10-30 08:00,2015-10-30 16:00,,2015-07-10 08:00,2015-07-10 16:00,2015-07-10 08:00,2015-07-10 16:00,2015-07-10 08:00,2015-07-10 16:00,2015-10-30 08:00,2015-10-30 16:00,,PT_Normal,,,,,iWvyA74UMkyW5ebgbK47cg,u4gT3PMrRmmN2CrDF+h56Q,,,N,0,0,,,2014-04-05 12:28,2014-04-05 13:21,admin,admin,
3330,143073,1749,35852,642,0,N,N,N,CP_Drtn,TT_Task,DT_FixedDUR2,TK_NotStart,P7-ST-GF-1030,FW for Slab,4433,896,0,80,0,21904.201234,21904.201234,80,177731.392672,0,177731.392672,,,,2015-10-31 08:00,2015-11-09 16:00,,2015-07-11 08:00,2015-07-20 16:00,2015-07-11 08:00,2015-07-20 16:00,2015-07-11 08:00,2015-07-20 16:00,2015-10-31 08:00,2015-11-09 16:00,,PT_Normal,,,,,e9oBHs4m30OGCp2szeis/Q,uVpUsvbASNuVp9fcFR3IcQ,,,N,0,0,,,2014-04-05 12:28,2014-04-05 13:21,admin,admin,
3331,143074,1749,35852,642,0,N,N,N,CP_Drtn,TT_Task,DT_FixedDUR2,TK_NotStart,P7-ST-GF-1050,Reinforcement for Slab,4433,896,0,80,0,2721.801743,2721.801743,80,335850.18888,0,335850.18888,,,,2015-11-10 08:00,2015-11-19 16:00,,2015-07-21 08:00,2015-07-30 16:00,2015-07-21 08:00,2015-07-30 16:00,2015-07-21 08:00,2015-07-30 16:00,2015-11-10 08:00,2015-11-19 16:00,,PT_Normal,,,,,HjtaMh4LUkCCE0ByeIexlg,lIMpbUwUTc2DE3UoP4+sJA,,,N,0,0,,,2014-04-05 12:28,2014-04-05 13:21,admin,admin,
3332,143075,1749,35852,642,0,N,N,N,CP_Drtn,TT_Task,DT_FixedDUR2,TK_NotStart,P7-ST-GF-1060,Concrete for Slab,4433,896,0,8,0,7087.214059,7087.214059,8,218115.988054,0,218115.988054,,,,2015-11-20 08:00,2015-11-20 16:00,,2015-07-31 08:00,2015-07-31 16:00,2015-07-31 08:00,2015-07-31 16:00,2015-07-31 08:00,2015-07-31 16:00,2015-11-20 08:00,2015-11-20 16:00,,PT_Normal,,,,,twljzGPUv0O8j/15GLUa6w,xmLPPobgQZGf2LhZSnu+jA,,,N,0,0,,,2014-04-05 12:28,2014-04-05 13:21,admin,admin,
3333,143076,1749,35530,642,0,N,N,N,CP_Drtn,TT_Task,DT_FixedDUR2,TK_NotStart,AUTH-DR-100,Ready to Tie In / Ready to Connect to Main Drainage Network,,0,0,8,0,0,0,8,1,0,1,,,,2016-03-05 16:00,2016-03-06 16:00,,2016-03-06 08:00,2016-03-06 16:00,2016-03-06 08:00,2016-03-06 16:00,2016-03-06 08:00,2016-03-06 16:00,2016-03-05 16:00,2016-03-06 16:00,,PT_Normal,,,,,mivaScgEFUaJ//iYJ+DJ2w,Pj0AHMVQREuilKaf9CTqbQ,,,Y,0,0,,,2014-04-05 12:28,2014-04-05 13:21,admin,admin,
3334,143077,1749,35530,642,0,N,N,N,CP_Drtn,TT_Task,DT_FixedDUR2,TK_NotStart,AUTH-DR-110,Connection of Drainage line to Main Network,,64,0,40,0,0,0,40,5,0,5,,,,2016-03-15 08:00,2016-03-19 16:00,,2016-03-07 08:00,2016-03-11 16:00,2016-03-07 08:00,2016-03-11 16:00,2016-03-07 08:00,2016-03-11 16:00,2016-03-15 08:00,2016-03-19 16:00,,PT_Normal,,,,,3XbNKGgrTk+yM8lSz73GOg,IF1H8O7xRD+5SvHmFfuwFw,,,N,0,0,,,2014-04-05 12:28,2014-04-05 13:21,admin,admin,
3335,143078,1749,35530,642,0,N,N,N,CP_Drtn,TT_Task,DT_FixedDUR2,TK_NotStart,AUTH-DR-120,Inspection of Drainage System By Authority,,64,0,96,0,0,0,96,12,0,12,,,,2016-03-20 08:00,2016-03-31 16:00,,2016-03-12 08:00,2016-03-23 16:00,2016-03-12 08:00,2016-03-23 16:00,2016-03-12 08:00,2016-03-23 16:00,2016-03-20 08:00,2016-03-31 16:00,,PT_Normal,,,,,yNK/0oa6eEia+eIz72Kn7A,VBl6J+SjT8eLhs9k+4oJ2w,,,N,0,0,,,2014-04-05 12:28,2014-04-05 13:21,admin,admin,
3336,143079,1749,35530,642,0,N,N,N,CP_Drtn,TT_FinMile,DT_FixedDrtn,TK_NotStart,AUTH-DR-130,Drainage Permanent Connection Available,,64,64,0,0,0,0,0,0,0,0,,,,2016-03-31 16:00,2016-03-31 16:00,,2016-03-23 16:00,2016-03-23 16:00,2016-03-23 16:00,2016-03-23 16:00,2016-03-23 16:00,2016-03-23 16:00,2016-03-31 16:00,2016-03-31 16:00,,PT_Normal,,,,,Rb0ck8gYzkCOTn+Rz3cqog,1XkaVxAGR3ac7fxNVybI/g,,,N,0,0,,,2014-04-05 12:28,2014-04-05 12:28,admin,admin,
3337,143080,1749,35530,642,0,N,N,N,CP_Drtn,TT_FinMile,DT_FixedDrtn,TK_NotStart,AUTH-DR-140,Obtain Authority Approval,,64,0,0,0,0,0,0,0,0,0,,,,2016-03-31 16:00,2016-03-31 16:00,,2016-03-23 16:00,2016-03-23 16:00,2016-03-23 16:00,2016-03-23 16:00,2016-03-23 16:00,2016-03-23 16:00,2016-03-31 16:00,2016-03-31 16:00,,PT_Normal,,,,,tCnBCRF33kSQzQzq/llYNw,oibZHwSlTXOjTK1zNEKn+A,,,N,0,0,,,2014-04-05 12:28,2014-04-05 12:28,admin,admin,
3338,143081,1749,35554,642,0,N,N,N,CP_Drtn,TT_Task,DT_FixedDUR2,TK_NotStart,AUTH-WS-100,Ready to Tie In / Ready to Connect to Main Water Supply Network,,264,264,8,0,0,0,8,1,0,1,,,,2016-02-13 08:00,2016-02-13 16:00,,2016-01-11 08:00,2016-01-11 16:00,2016-01-11 08:00,2016-01-11 16:00,2016-01-11 08:00,2016-01-11 16:00,2016-02-13 08:00,2016-02-13 16:00,,PT_Normal,,,,,YhgqYxtbpk69fr+abAlk7w,fJ2bH85JQfOdTwn1u5rl9g,,,N,0,0,,,2014-04-05 12:28,2014-04-05 13:21,admin,admin,
3339,143082,1749,35554,642,0,N,N,N,CP_Drtn,TT_Task,DT_FixedDUR2,TK_NotStart,AUTH-WS-110,Connection  to the Main Network,,0,0,40,0,0,0,40,5,0,5,,,,2016-03-01 08:00,2016-03-05 16:00,,2016-03-01 08:00,2016-03-05 16:00,2016-03-01 08:00,2016-03-05 16:00,2016-03-01 08:00,2016-03-05 16:00,2016-03-01 08:00,2016-03-05 16:00,,PT_Normal,,,,,UV98P5whwUuoRBWIhgIHlA,GDpJmohGQD2dyG2v89zMpQ,,,Y,0,0,,,2014-04-05 12:28,2014-04-05 13:21,admin,admin,
3340,143083,1749,35554,642,0,N,N,N,CP_Drtn,TT_Task,DT_FixedDUR2,TK_NotStart,AUTH-WS-120,Inspection of Water Supply System By Authority,,0,0,112,0,0,0,112,14,0,14,,,,2016-03-06 08:00,2016-03-19 16:00,,2016-03-06 08:00,2016-03-19 16:00,2016-03-06 08:00,2016-03-19 16:00,2016-03-06 08:00,2016-03-19 16:00,2016-03-06 08:00,2016-03-19 16:00,,PT_Normal,,,,,UrmiLT88002p2NByq/X21A,Qp9FwSiXRWukaSG2Hh1Jxw,,,Y,0,0,,,2014-04-05 12:28,2014-04-05 13:21,admin,admin,
3341,143084,1749,35554,642,0,N,N,N,CP_Drtn,TT_FinMile,DT_FixedDrtn,TK_NotStart,AUTH-WS-130,Water Supply Permanent Connection Available,,0,0,0,0,0,0,0,0,0,0,,,,2016-03-19 16:00,2016-03-19 16:00,,2016-03-19 16:00,2016-03-19 16:00,2016-03-19 16:00,2016-03-19 16:00,2016-03-19 16:00,2016-03-19 16:00,2016-03-19 16:00,2016-03-19 16:00,,PT_Normal,,,,,8T5rTdjfUkuc1B5ZYld9LA,0ZPaMOKBSD+SXzAs+VVj6w,,,Y,0,0,,,2014-04-05 12:28,2014-04-05 12:28,admin,admin,
3342,143085,1749,35554,642,0,N,N,N,CP_Drtn,TT_FinMile,DT_FixedDrtn,TK_NotStart,AUTH-WS-140,Obtain Authority Approval,,0,0,0,0,0,0,0,0,0,0,,,,2016-03-19 16:00,2016-03-19 16:00,,2016-03-19 16:00,2016-03-19 16:00,2016-03-19 16:00,2016-03-19 16:00,2016-03-19 16:00,2016-03-19 16:00,2016-03-19 16:00,2016-03-19 16:00,,PT_Normal,,,,,yjjoFHOtbEuD6gv69hzCoA,2OuRBDRbR22SG3bhxNYmow,,,Y,0,0,,,2014-04-05 12:28,2014-04-05 12:28,admin,admin,
3343,143086,1749,35555,642,0,N,N,N,CP_Drtn,TT_Task,DT_FixedDUR2,TK_NotStart,AUTH-FF-100,Inspection of Fire Fighting System By Authority,,0,0,96,0,0,0,96,12,0,12,,,,2016-03-20 08:00,2016-03-31 16:00,,2016-03-20 08:00,2016-03-31 16:00,2016-03-20 08:00,2016-03-31 16:00,2016-03-20 08:00,2016-03-31 16:00,2016-03-20 08:00,2016-03-31 16:00,,PT_Normal,,,,,MEsPBc7xWU2mpUufmhP1/w,A2E/mbd0QgyBL2g0wiU5/w,,,Y,0,0,,,2014-04-05 12:28,2014-04-05 13:21,admin,admin,
3344,143087,1749,35555,642,0,N,N,N,CP_Drtn,TT_FinMile,DT_FixedDrtn,TK_NotStart,AUTH-FF-110,Approval Of Fire Fighting System By Authority,,0,0,0,0,0,0,0,0,0,0,,,,2016-03-31 16:00,2016-03-31 16:00,,2016-03-31 16:00,2016-03-31 16:00,2016-03-31 16:00,2016-03-31 16:00,2016-03-31 16:00,2016-03-31 16:00,2016-03-31 16:00,2016-03-31 16:00,,PT_Normal,,,,,ko+n9iwKxU6sFS3oc6DKeg,bR5utbE5RrGiXph9pLr9uA,,,Y,0,0,,,2014-04-05 12:28,2014-04-05 12:28,admin,admin,
3345,143088,1749,35556,642,0,N,N,N,CP_Drtn,TT_Mile,DT_FixedDrtn,TK_NotStart,AUTH-EL-100,Temperaty Power On for Testing & Commissioning,,448,0,0,0,0,0,0,0,0,0,,,,2016-01-19 08:00,2016-01-19 08:00,,2015-11-24 08:00,2015-11-24 08:00,2015-11-24 08:00,2015-11-24 08:00,2015-11-24 08:00,2015-11-24 08:00,2016-01-19 08:00,2016-01-19 08:00,,PT_Normal,,,,,u+C+DnygbUy9O20tnOfv7w,akkYtRElSaayc2PjAgC+wg,,,N,0,0,,,2014-04-05 12:28,2014-04-05 12:28,admin,admin,
3346,143089,1749,35556,642,0,N,N,N,CP_Drtn,TT_Task,DT_FixedDUR2,TK_NotStart,AUTH-EL-110,Ready for Initial Inspection By Authority,,336,0,40,0,0,0,40,5,0,5,,,,2016-02-09 08:00,2016-02-13 16:00,,2015-12-29 08:00,2016-01-02 16:00,2015-12-29 08:00,2016-01-02 16:00,2015-12-29 08:00,2016-01-02 16:00,2016-02-09 08:00,2016-02-13 16:00,,PT_Normal,,,,,epdb5ZOGsUeqbOfUGse/Ew,s4zjPPDSSEyw4uQejUXjJQ,,,N,0,0,,,2014-04-05 12:28,2014-04-05 13:21,admin,admin,
3347,143090,1749,35556,642,0,N,N,N,CP_Drtn,TT_Task,DT_FixedDUR2,TK_NotStart,AUTH-EL-120,Authority Initial Inspection,,336,0,112,0,0,0,112,14,0,14,,,,2016-02-14 08:00,2016-02-27 16:00,,2016-01-03 08:00,2016-01-16 16:00,2016-01-03 08:00,2016-01-16 16:00,2016-01-03 08:00,2016-01-16 16:00,2016-02-14 08:00,2016-02-27 16:00,,PT_Normal,,,,,Wujh6EWDeUegIzniqfB4hA,NswPuxzgS4KI9MdYL4Panw,,,N,0,0,,,2014-04-05 12:28,2014-04-05 13:21,admin,admin,
3348,143091,1749,35556,642,0,N,N,N,CP_Drtn,TT_Task,DT_FixedDUR2,TK_NotStart,AUTH-EL-130,Authority Final Inspection,,336,0,80,0,0,0,80,10,0,10,,,,2016-02-28 08:00,2016-03-08 16:00,,2016-01-17 08:00,2016-01-26 16:00,2016-01-17 08:00,2016-01-26 16:00,2016-01-17 08:00,2016-01-26 16:00,2016-02-28 08:00,2016-03-08 16:00,,PT_Normal,,,,,mBwpj8Zik0y3o9zDgc7cvw,TWg2BKY6RNeQ7xWcgw+WPw,,,N,0,0,,,2014-04-05 12:28,2014-04-05 13:21,admin,admin,
3349,143092,1749,35556,642,0,N,N,N,CP_Drtn,TT_FinMile,DT_FixedDrtn,TK_NotStart,AUTH-EL-140,Power On,,336,0,0,0,0,0,0,0,0,0,,,,2016-03-08 16:00,2016-03-08 16:00,,2016-01-26 16:00,2016-01-26 16:00,2016-01-26 16:00,2016-01-26 16:00,2016-01-26 16:00,2016-01-26 16:00,2016-03-08 16:00,2016-03-08 16:00,,PT_Normal,,,,,eWByQAaru0yIYKUGMAmhOQ,7bkWscE7TZeMO4TqGYZyOg,,,N,0,0,,,2014-04-05 12:28,2014-04-05 12:28,admin,admin,
3350,143093,1749,35567,644,0,N,N,N,CP_Drtn,TT_Task,DT_FixedDUR2,TK_NotStart,T&C-BL1-150,Flushing for Chilled Water Pipes,,488,0,240,0,0,0,240,30,0,30,,,,2016-02-03 08:00,2016-03-08 16:00,,2015-11-24 08:00,2015-12-28 16:00,2015-11-24 08:00,2015-12-28 16:00,2015-11-24 08:00,2015-12-28 16:00,2016-02-03 08:00,2016-03-08 16:00,,PT_Normal,,,,,rJj6tJ+6pUyAIe6uCMXfYA,,,,N,0,0,,,2014-04-05 12:28,2014-04-05 13:21,admin,admin,
3351,143094,1749,35541,644,0,N,N,N,CP_Drtn,TT_Task,DT_FixedDUR2,TK_NotStart,T&C-BL2-160,Flushing for Chilled Water Pipes,,248,0,240,0,0,0,240,30,0,30,,,,2016-02-03 08:00,2016-03-08 16:00,,2015-12-29 08:00,2016-02-01 16:00,2015-12-29 08:00,2016-02-01 16:00,2015-12-29 08:00,2016-02-01 16:00,2016-02-03 08:00,2016-03-08 16:00,,PT_Normal,,,,,K0Mrp1GEKEWhNAJfDEE3qw,Ta1TW4fHlkSBmYIyqfKpyg,,,N,0,0,,,2014-04-05 12:28,2014-04-05 13:21,admin,admin,
3352,143095,1749,35545,644,0,N,N,N,CP_Drtn,TT_Task,DT_FixedDUR2,TK_NotStart,T&C-BL3-170,Flushing for Chilled Water Pipes,,48,64,240,0,0,0,240,30,0,30,,,,2016-02-27 08:00,2016-03-31 16:00,,2016-02-20 08:00,2016-03-24 16:00,2016-02-20 08:00,2016-03-24 16:00,2016-02-20 08:00,2016-03-24 16:00,2016-02-27 08:00,2016-03-31 16:00,,PT_Normal,,,,,oNeJsl5Fc0eSpS6EHcCIXw,B0cCGkWZQkuuWQnnwsIvYg,,,N,0,0,,,2014-04-05 12:28,2014-04-05 13:21,admin,admin,
