,task_id,proj_id,wbs_id,clndr_id,est_wt,phys_complete_pct,rev_fdbk_flag,lock_plan_flag,auto_compute_act_flag,complete_pct_type,task_type,duration_type,review_type,status_code,task_code,task_name,rsrc_id,total_float_hr_cnt,free_float_hr_cnt,remain_drtn_hr_cnt,act_work_qty,remain_work_qty,target_work_qty,target_drtn_hr_cnt,target_equip_qty,act_equip_qty,remain_equip_qty,cstr_date,act_start_date,act_end_date,late_start_date,late_end_date,expect_end_date,early_start_date,early_end_date,restart_date,reend_date,target_start_date,target_end_date,review_end_date,rem_late_start_date,rem_late_end_date,cstr_type,priority_type,suspend_date,resume_date,float_path,float_path_order,guid,tmpl_guid,cstr_date2,cstr_type2,driving_path_flag,act_this_per_work_qty,act_this_per_equip_qty,external_early_start_date,external_late_end_date,create_date,update_date,create_user,update_user
0,85169,1180,11224,841,0,0,N,N,N,CP_Drtn,TT_Mile,DT_FixedDrtn,RV_OK,TK_NotStart,DD170,Guard bollard delivery on site,,40,0,0,0,0,0,0,0,0,0,,,,2012-04-01 08:00,2012-04-01 08:00,,2012-03-26 08:00,2012-03-26 08:00,2012-03-26 08:00,2012-03-26 08:00,2012-03-26 08:00,2012-03-26 08:00,,2012-04-01 08:00,2012-04-01 08:00,,PT_Normal,,,,,QbVkOQoCRiKxnC6eubPAKA,,,,N,0,0,,,2011-11-20 13:37,2011-11-20 13:37,admin,admin
1,85170,1180,11224,841,0,0,N,N,N,CP_Drtn,TT_Mile,DT_FixedDrtn,RV_OK,TK_NotStart,DD200,Windows delivery on site,,128,104,0,0,0,0,0,0,0,0,,,,2012-04-28 08:00,2012-04-28 08:00,,2012-04-09 08:00,2012-04-09 08:00,2012-04-09 08:00,2012-04-09 08:00,2012-04-09 08:00,2012-04-09 08:00,,2012-04-28 08:00,2012-04-28 08:00,,PT_Normal,,,,,gEp0Q/acTs6GHCGFXsg+tA,yG244tJxSSyUfgdrznr8kA,,,N,0,0,,,2011-11-20 13:37,2011-11-20 13:37,admin,admin
2,85171,1180,11224,841,0,0,N,N,N,CP_Drtn,TT_Mile,DT_FixedDrtn,RV_OK,TK_NotStart,DD210,Doors delivery on site,,0,0,0,0,0,0,0,0,0,0,,,,2012-04-05 08:00,2012-04-05 08:00,,2012-04-05 08:00,2012-04-05 08:00,2012-04-05 08:00,2012-04-05 08:00,2012-04-05 08:00,2012-04-05 08:00,,2012-04-05 08:00,2012-04-05 08:00,,PT_Normal,,,,,1u8ERTAdRyCLlE7rNBsALQ,LwxOL0OA70ir27sTopBkvQ,,,Y,0,0,,,2011-11-20 13:37,2011-11-20 13:37,admin,admin
3,85172,1180,11224,841,0,0,N,N,N,CP_Drtn,TT_Mile,DT_FixedDrtn,RV_OK,TK_NotStart,DD140,Polyurethane delivery on site,,48,0,0,0,0,0,0,0,0,0,,,,2012-04-22 08:00,2012-04-22 08:00,,2012-04-15 08:00,2012-04-15 08:00,2012-04-15 08:00,2012-04-15 08:00,2012-04-15 08:00,2012-04-15 08:00,,2012-04-22 08:00,2012-04-22 08:00,,PT_Normal,,,,,LKG+lP3DTOeE0TkoBw9Geg,,,,N,0,0,,,2011-11-20 13:37,2011-11-20 13:37,admin,admin
4,85173,1180,11224,841,0,0,N,N,N,CP_Drtn,TT_Mile,DT_FixedDrtn,RV_OK,TK_NotStart,DD120,Delivery of walk-on-ceiling laminated with electrostatic galvanized steel,,56,32,0,0,0,0,0,0,0,0,,,,2012-03-26 16:00,2012-03-26 16:00,,2012-03-19 08:00,2012-03-19 08:00,2012-03-19 08:00,2012-03-19 08:00,2012-03-19 08:00,2012-03-19 08:00,,2012-03-26 16:00,2012-03-26 16:00,,PT_Normal,,,,,H1I6qFn0T6iAm5QZPzqt4g,,,,N,0,0,,,2011-11-20 13:37,2011-11-20 13:37,admin,admin
5,85174,1180,11224,841,1,0,N,N,N,CP_Drtn,TT_Task,DT_FixedDrtn,RV_OK,TK_NotStart,DD110,Steel structure delivery on site,,40,8,96,0,0,0,96,0,0,0,,,,2012-02-06 08:00,2012-02-19 16:00,,2012-01-31 08:00,2012-02-13 16:00,2012-01-31 08:00,2012-02-13 16:00,2012-01-31 08:00,2012-02-13 16:00,,2012-02-06 08:00,2012-02-19 16:00,,PT_Normal,,,,,kJ8IDse1SHuGyot0oDt+SA,,,,N,0,0,,,2011-11-20 13:37,2011-11-20 13:37,admin,admin
6,85175,1180,11224,841,0,0,N,N,N,CP_Drtn,TT_Mile,DT_FixedDrtn,RV_OK,TK_NotStart,DD130,Metal works delivery on site,,72,24,0,0,0,0,0,0,0,0,,,,2012-04-12 08:00,2012-04-12 08:00,,2012-04-02 08:00,2012-04-02 08:00,2012-04-02 08:00,2012-04-02 08:00,2012-04-02 08:00,2012-04-02 08:00,,2012-04-12 08:00,2012-04-12 08:00,,PT_Normal,,,,,tR90KcTzSeqlBsn2QLHwVQ,,,,N,0,0,,,2011-11-20 13:37,2011-11-20 13:37,admin,admin
7,85176,1180,11224,841,0,0,N,N,N,CP_Drtn,TT_Mile,DT_FixedDrtn,RV_OK,TK_NotStart,DD100,Sandwich panel delivery on site,,232,72,0,0,0,0,0,0,0,0,,,,2012-03-12 08:00,2012-03-12 08:00,,2012-02-07 08:00,2012-02-07 08:00,2012-02-07 08:00,2012-02-07 08:00,2012-02-07 08:00,2012-02-07 08:00,,2012-03-12 08:00,2012-03-12 08:00,,PT_Normal,,,,,sGesmLyVTEywA634jNZppQ,,,,N,0,0,,,2011-11-20 13:37,2011-11-20 13:37,admin,admin
8,85177,1180,11224,841,0,0,N,N,N,CP_Drtn,TT_Mile,DT_FixedDrtn,RV_OK,TK_NotStart,DD150,Steel stairs Delivery on site,,304,72,0,0,0,0,0,0,0,0,,,,2012-04-28 08:00,2012-04-28 08:00,,2012-03-14 08:00,2012-03-14 08:00,2012-03-14 08:00,2012-03-14 08:00,2012-03-14 08:00,2012-03-14 08:00,,2012-04-28 08:00,2012-04-28 08:00,,PT_Normal,,,,,bzCaiw91SSOQLPJwQJ9KMQ,,,,N,0,0,,,2011-11-20 13:37,2011-11-20 13:37,admin,admin
9,85178,1180,11224,841,0,0,N,N,N,CP_Drtn,TT_Mile,DT_FixedDrtn,RV_OK,TK_NotStart,DD160,Roll up shutter doors delivery on site,,8,0,0,0,0,0,0,0,0,0,,,,2012-04-18 08:00,2012-04-18 08:00,,2012-04-17 08:00,2012-04-17 08:00,2012-04-17 08:00,2012-04-17 08:00,2012-04-17 08:00,2012-04-17 08:00,,2012-04-18 08:00,2012-04-18 08:00,,PT_Normal,,,,,OTPvd182SMG1VJeeMDhXbQ,,,,N,0,0,,,2011-11-20 13:37,2011-11-20 13:37,admin,admin
10,85179,1180,11225,841,0,0,N,N,N,CP_Drtn,TT_Mile,DT_FixedDrtn,RV_OK,TK_NotStart,PO 150,Guard bollard purchase order,,40,0,0,0,0,0,0,0,0,0,,,,2012-01-22 08:00,2012-01-22 08:00,,2012-01-16 08:00,2012-01-16 08:00,2012-01-16 08:00,2012-01-16 08:00,2012-01-16 08:00,2012-01-16 08:00,,2012-01-22 08:00,2012-01-22 08:00,,PT_Normal,,,,,xUFRsCZLQniwlPosIy3IzQ,,,,N,0,0,,,2011-11-20 13:37,2011-11-20 13:37,admin,admin
11,85180,1180,11225,841,0,0,N,N,N,CP_Drtn,TT_Mile,DT_FixedDrtn,RV_OK,TK_NotStart,PO 180,Windows purchase order,,128,0,0,0,0,0,0,0,0,0,,,,2012-03-24 08:00,2012-03-24 08:00,,2012-03-05 08:00,2012-03-05 08:00,2012-03-05 08:00,2012-03-05 08:00,2012-03-05 08:00,2012-03-05 08:00,,2012-03-24 08:00,2012-03-24 08:00,,PT_Normal,,,,,HVsLRV9bRY+0CEx84TgcDA,+NlCFveHQfO9cPW1Iic19w,,,N,0,0,,,2011-11-20 13:37,2011-11-20 13:37,admin,admin
12,85181,1180,11225,841,0,0,N,N,N,CP_Drtn,TT_Mile,DT_FixedDrtn,RV_OK,TK_NotStart,PO 190,Doors purchase orders,,0,0,0,0,0,0,0,0,0,0,,,,2012-01-26 08:00,2012-01-26 08:00,,2012-01-26 08:00,2012-01-26 08:00,2012-01-26 08:00,2012-01-26 08:00,2012-01-26 08:00,2012-01-26 08:00,,2012-01-26 08:00,2012-01-26 08:00,,PT_Normal,,,,,xhvECmCoQaORSZhXB2XZDQ,+NlCFveHQfO9cPW1Iic19w,,,Y,0,0,,,2011-11-20 13:37,2011-11-20 13:37,admin,admin
13,85182,1180,11225,841,0,0,N,N,N,CP_Drtn,TT_Mile,DT_FixedDrtn,RV_OK,TK_NotStart,PO 100,Polyurethane purchase order,,48,0,0,0,0,0,0,0,0,0,,,,2012-01-08 08:00,2012-01-08 08:00,,2012-01-01 08:00,2012-01-01 08:00,2012-01-01 08:00,2012-01-01 08:00,2012-01-01 08:00,2012-01-01 08:00,,2012-01-08 08:00,2012-01-08 08:00,,PT_Normal,,,,,1wOyXVQYTJqQAtr742sA+g,,,,N,0,0,,,2011-11-20 13:37,2011-11-20 13:37,admin,admin
14,85183,1180,11225,841,0,0,N,N,N,CP_Drtn,TT_Mile,DT_FixedDrtn,RV_OK,TK_NotStart,PO 130,Walk on ceiling purchase order,,56,0,0,0,0,0,0,0,0,0,,,,2011-12-29 08:00,2011-12-29 08:00,,2011-12-21 08:00,2011-12-21 08:00,2011-12-21 08:00,2011-12-21 08:00,2011-12-21 08:00,2011-12-21 08:00,,2011-12-29 08:00,2011-12-29 08:00,,PT_Normal,,,,,ePO3LF/+ThKxBdBfYOG5rw,,,,N,0,0,,,2011-11-20 13:37,2011-11-20 13:37,admin,admin
15,85184,1180,11225,841,0,0,N,N,N,CP_Drtn,TT_Mile,DT_FixedDrtn,RV_OK,TK_NotStart,PO 120,Steel structure purchase order,,40,0,0,0,0,0,0,0,0,0,,,,2011-11-23 08:00,2011-11-23 08:00,,2011-11-17 08:00,2011-11-17 08:00,2011-11-17 08:00,2011-11-17 08:00,2011-11-17 08:00,2011-11-17 08:00,,2011-11-23 08:00,2011-11-23 08:00,,PT_Normal,,,,,DkWdkSqwSoa5hrtF3Fm6tA,,,,N,0,0,,,2011-11-20 13:37,2011-11-20 13:37,admin,admin
16,85185,1180,11225,841,0,0,N,N,N,CP_Drtn,TT_Mile,DT_FixedDrtn,RV_OK,TK_NotStart,PO 140,Metal works purchase order,,72,0,0,0,0,0,0,0,0,0,,,,2012-02-02 08:00,2012-02-02 08:00,,2012-01-23 08:00,2012-01-23 08:00,2012-01-23 08:00,2012-01-23 08:00,2012-01-23 08:00,2012-01-23 08:00,,2012-02-02 08:00,2012-02-02 08:00,,PT_Normal,,,,,eQXeiOwnTw+LyxJge5AARA,,,,N,0,0,,,2011-11-20 13:37,2011-11-20 13:37,admin,admin
17,85186,1180,11225,841,0,0,N,N,N,CP_Drtn,TT_Mile,DT_FixedDrtn,RV_OK,TK_NotStart,PO 110,Sandwich panel purchase order,,232,0,0,0,0,0,0,0,0,0,,,,2012-01-19 08:00,2012-01-19 08:00,,2011-12-17 08:00,2011-12-17 08:00,2011-12-17 08:00,2011-12-17 08:00,2011-12-17 08:00,2011-12-17 08:00,,2012-01-19 08:00,2012-01-19 08:00,,PT_Normal,,,,,ZuhqKJcHSwOdr6/7hqzXLQ,,,,N,0,0,,,2011-11-20 13:37,2011-11-20 13:37,admin,admin
18,85187,1180,11279,841,1,0,N,N,N,CP_Drtn,TT_Task,DT_FixedDUR2,RV_OK,TK_NotStart,MT-1000,Sandwich panel submittal,,232,0,24,0,0,0,24,0,0,0,,,,2011-12-25 08:00,2011-12-27 16:00,,2011-11-20 08:00,2011-11-22 16:00,2011-11-20 08:00,2011-11-22 16:00,2011-11-20 08:00,2011-11-22 16:00,,2011-12-25 08:00,2011-12-27 16:00,,PT_Normal,,,,,bDMC1cRGTAa7mGn2CkNe5g,Muzq1Pe6jUCrvWeDsHDDbg,,,N,0,0,,,2011-11-20 13:37,2011-11-20 14:06,admin,admin
19,85188,1180,11280,841,1,0,N,N,N,CP_Drtn,TT_Task,DT_FixedDUR2,RV_OK,TK_NotStart,MT-1090,Sandwich panel approval,,232,0,24,0,0,0,24,0,0,0,,,,2012-01-10 08:00,2012-01-12 16:00,,2011-12-07 08:00,2011-12-10 16:00,2011-12-07 08:00,2011-12-10 16:00,2011-12-07 08:00,2011-12-10 16:00,,2012-01-10 08:00,2012-01-12 16:00,,PT_Normal,,,,,YqZt7TS6Rju6BK7iSBLXQw,iIx63neXRUye+q/9yz5B8w,,,N,0,0,,,2011-11-20 13:37,2011-11-20 14:07,admin,admin
20,85189,1180,11279,841,1,0,N,N,N,CP_Drtn,TT_Task,DT_FixedDUR2,RV_OK,TK_NotStart,MT-1040,Over head door submittal,,72,0,16,0,0,0,16,0,0,0,,,,2011-12-11 08:00,2011-12-12 16:00,,2011-11-30 08:00,2011-12-01 16:00,2011-11-30 08:00,2011-12-01 16:00,2011-11-30 08:00,2011-12-01 16:00,,2011-12-11 08:00,2011-12-12 16:00,,PT_Normal,,,,,cw3vAGtYRDWoflNw54BUcw,Muzq1Pe6jUCrvWeDsHDDbg,,,N,0,0,,,2011-11-20 13:37,2011-11-20 14:06,admin,admin
21,85190,1180,11280,841,1,0,N,N,N,CP_Drtn,TT_Task,DT_FixedDUR2,RV_OK,TK_NotStart,MT-1150,Over head door approval,,72,72,16,0,0,0,16,0,0,0,,,,2011-12-27 08:00,2011-12-28 16:00,,2011-12-17 08:00,2011-12-18 16:00,2011-12-17 08:00,2011-12-18 16:00,2011-12-17 08:00,2011-12-18 16:00,,2011-12-27 08:00,2011-12-28 16:00,,PT_Normal,,,,,AXia45SeSGiDmR5cGlSjow,iIx63neXRUye+q/9yz5B8w,,,N,0,0,,,2011-11-20 13:37,2011-11-20 14:07,admin,admin
22,85191,1180,11279,841,1,0,N,N,N,CP_Drtn,TT_Task,DT_FixedDUR2,RV_OK,TK_NotStart,MT-1080,Galvanized steel flashing submittal,,552,0,16,0,0,0,16,0,0,0,,,,2012-04-09 08:00,2012-04-10 16:00,,2012-01-19 08:00,2012-01-21 16:00,2012-01-19 08:00,2012-01-21 16:00,2012-01-19 08:00,2012-01-21 16:00,,2012-04-09 08:00,2012-04-10 16:00,,PT_Normal,,,,,X8SAyPmkRNu9FMnKt5GYdg,662G0UBCtUiaPz4+4FsUvA,,,N,0,0,,,2011-11-20 13:37,2011-11-20 14:06,admin,admin
23,85192,1180,11280,841,1,0,N,N,N,CP_Drtn,TT_Task,DT_FixedDUR2,RV_OK,TK_NotStart,MT-1190,Galvanized steel flashing approval,,552,536,16,0,0,0,16,0,0,0,,,,2012-04-25 08:00,2012-04-26 16:00,,2012-02-05 08:00,2012-02-06 16:00,2012-02-05 08:00,2012-02-06 16:00,2012-02-05 08:00,2012-02-06 16:00,,2012-04-25 08:00,2012-04-26 16:00,,PT_Normal,,,,,FhCpnuhGSgCdMHKa/0A6Yg,0V6RQ5FwLU6AhMOYYTMJyA,,,N,0,0,,,2011-11-20 13:37,2011-11-20 14:07,admin,admin
24,85193,1180,11280,841,1,0,N,N,N,CP_Drtn,TT_Task,DT_FixedDUR2,RV_OK,TK_NotStart,MT-1170,Roll up shutter door approval,,72,72,16,0,0,0,16,0,0,0,,,,2011-12-27 08:00,2011-12-28 16:00,,2011-12-17 08:00,2011-12-18 16:00,2011-12-17 08:00,2011-12-18 16:00,2011-12-17 08:00,2011-12-18 16:00,,2011-12-27 08:00,2011-12-28 16:00,,PT_Normal,,,,,kYmKT72BRQmcwEtw87Lngg,iIx63neXRUye+q/9yz5B8w,,,N,0,0,,,2011-11-20 13:37,2011-11-20 14:07,admin,admin
25,85194,1180,11279,841,1,0,N,N,N,CP_Drtn,TT_Task,DT_FixedDUR2,RV_OK,TK_NotStart,MT-1060,Roll up shutter door submittal,,72,0,16,0,0,0,16,0,0,0,,,,2011-12-11 08:00,2011-12-12 16:00,,2011-11-30 08:00,2011-12-01 16:00,2011-11-30 08:00,2011-12-01 16:00,2011-11-30 08:00,2011-12-01 16:00,,2011-12-11 08:00,2011-12-12 16:00,,PT_Normal,,,,,UVH6cX0RSyuftkVDiyQp/w,Muzq1Pe6jUCrvWeDsHDDbg,,,N,0,0,,,2011-11-20 13:37,2011-11-20 14:06,admin,admin
26,85195,1180,11279,841,1,0,N,N,N,CP_Drtn,TT_Task,DT_FixedDUR2,RV_OK,TK_NotStart,MT-1070,Stainless steel doors submittal,,72,0,16,0,0,0,16,0,0,0,,,,2011-12-11 08:00,2011-12-12 16:00,,2011-11-30 08:00,2011-12-01 16:00,2011-11-30 08:00,2011-12-01 16:00,2011-11-30 08:00,2011-12-01 16:00,,2011-12-11 08:00,2011-12-12 16:00,,PT_Normal,,,,,6cVkbojrStOfUyQRSqgn0A,Muzq1Pe6jUCrvWeDsHDDbg,,,N,0,0,,,2011-11-20 13:37,2011-11-20 14:06,admin,admin
27,85196,1180,11280,841,1,0,N,N,N,CP_Drtn,TT_Task,DT_FixedDUR2,RV_OK,TK_NotStart,MT-1180,Stainless steel doors approval,,72,72,16,0,0,0,16,0,0,0,,,,2011-12-27 08:00,2011-12-28 16:00,,2011-12-17 08:00,2011-12-18 16:00,2011-12-17 08:00,2011-12-18 16:00,2011-12-17 08:00,2011-12-18 16:00,,2011-12-27 08:00,2011-12-28 16:00,,PT_Normal,,,,,Q6ayGcjaSzSVjCkFlI34rg,iIx63neXRUye+q/9yz5B8w,,,N,0,0,,,2011-11-20 13:37,2011-11-20 14:07,admin,admin
28,85197,1180,11279,841,1,0,N,N,N,CP_Drtn,TT_Task,DT_FixedDUR2,RV_OK,TK_NotStart,MT-1100,Corrugated sheets submittal,,376,0,16,0,0,0,16,0,0,0,,,,2012-03-14 08:00,2012-03-15 16:00,,2012-01-19 08:00,2012-01-21 16:00,2012-01-19 08:00,2012-01-21 16:00,2012-01-19 08:00,2012-01-21 16:00,,2012-03-14 08:00,2012-03-15 16:00,,PT_Normal,,,,,CSMwlvmhTraSy6Z9or11gg,Muzq1Pe6jUCrvWeDsHDDbg,,,N,0,0,,,2011-11-20 13:37,2011-11-20 14:06,admin,admin
29,85198,1180,11280,841,1,0,N,N,N,CP_Drtn,TT_Task,DT_FixedDUR2,RV_OK,TK_NotStart,MT-1200,Corrugated sheets approval,,376,240,16,0,0,0,16,0,0,0,,,,2012-03-31 08:00,2012-04-01 16:00,,2012-02-05 08:00,2012-02-06 16:00,2012-02-05 08:00,2012-02-06 16:00,2012-02-05 08:00,2012-02-06 16:00,,2012-03-31 08:00,2012-04-01 16:00,,PT_Normal,,,,,dtKYWwWWQ0uKZ+o1T7kV1g,iIx63neXRUye+q/9yz5B8w,,,N,0,0,,,2011-11-20 13:37,2011-11-20 14:07,admin,admin
30,85199,1180,11279,841,1,0,N,N,N,CP_Drtn,TT_Task,DT_FixedDUR2,RV_OK,TK_NotStart,MT-1020,walk on ceiling submittal,,56,0,56,0,0,0,56,0,0,0,,,,2011-12-03 08:00,2011-12-10 16:00,,2011-11-23 08:00,2011-12-01 16:00,2011-11-23 08:00,2011-12-01 16:00,2011-11-23 08:00,2011-12-01 16:00,,2011-12-03 08:00,2011-12-10 16:00,,PT_Normal,,,,,qhSf88NqQGmjjG2vpNNNOg,Muzq1Pe6jUCrvWeDsHDDbg,,,N,0,0,,,2011-11-20 13:37,2011-11-20 14:06,admin,admin
31,85200,1180,11280,841,1,0,N,N,N,CP_Drtn,TT_Task,DT_FixedDUR2,RV_OK,TK_NotStart,MT-1130,walk on ceiling approval,,56,0,56,0,0,0,56,0,0,0,,,,2011-12-19 08:00,2011-12-26 16:00,,2011-12-11 08:00,2011-12-18 16:00,2011-12-11 08:00,2011-12-18 16:00,2011-12-11 08:00,2011-12-18 16:00,,2011-12-19 08:00,2011-12-26 16:00,,PT_Normal,,,,,AYGQJch/Qg2gyAlWdVaZVA,iIx63neXRUye+q/9yz5B8w,,,N,0,0,,,2011-11-20 13:37,2011-11-20 14:07,admin,admin
32,85201,1180,11279,841,1,0,N,N,N,CP_Drtn,TT_Task,DT_FixedDUR2,RV_OK,TK_NotStart,MT-1030,Steel structure paints submittal,,712,0,16,0,0,0,16,0,0,0,,,,2012-03-08 08:00,2012-03-10 16:00,,2011-11-24 08:00,2011-11-26 16:00,2011-11-24 08:00,2011-11-26 16:00,2011-11-24 08:00,2011-11-26 16:00,,2012-03-08 08:00,2012-03-10 16:00,,PT_Normal,,,,,7DDXhU28RT+dXZ9UTJIDnQ,Muzq1Pe6jUCrvWeDsHDDbg,,,N,0,0,,,2011-11-20 13:37,2011-11-20 14:06,admin,admin
33,85202,1180,11280,841,1,0,N,N,N,CP_Drtn,TT_Task,DT_FixedDUR2,RV_OK,TK_NotStart,MT-1140,Steel structure paints approval,,712,616,16,0,0,0,16,0,0,0,,,,2012-03-25 08:00,2012-03-26 16:00,,2011-12-12 08:00,2011-12-13 16:00,2011-12-12 08:00,2011-12-13 16:00,2011-12-12 08:00,2011-12-13 16:00,,2012-03-25 08:00,2012-03-26 16:00,,PT_Normal,,,,,vUtwlG+lRtWmjFyNJXbDyg,iIx63neXRUye+q/9yz5B8w,,,N,0,0,,,2011-11-20 13:37,2011-11-20 14:07,admin,admin
34,85203,1180,11279,841,1,0,N,N,N,CP_Drtn,TT_Task,DT_FixedDUR2,RV_OK,TK_NotStart,MT-1050,Aluminum windows submittal,,128,0,56,0,0,0,56,0,0,0,,,,2012-02-04 08:00,2012-02-11 16:00,,2012-01-16 08:00,2012-01-23 16:00,2012-01-16 08:00,2012-01-23 16:00,2012-01-16 08:00,2012-01-23 16:00,,2012-02-04 08:00,2012-02-11 16:00,,PT_Normal,,,,,TPsQQttlRMqi9P17QetVXA,Muzq1Pe6jUCrvWeDsHDDbg,,,N,0,0,,,2011-11-20 13:37,2011-11-20 14:06,admin,admin
35,85204,1180,11280,841,1,0,N,N,N,CP_Drtn,TT_Task,DT_FixedDUR2,RV_OK,TK_NotStart,MT-1160,Aluminum windows approval,,128,0,56,0,0,0,56,0,0,0,,,,2012-02-20 08:00,2012-02-27 16:00,,2012-02-01 08:00,2012-02-08 16:00,2012-02-01 08:00,2012-02-08 16:00,2012-02-01 08:00,2012-02-08 16:00,,2012-02-20 08:00,2012-02-27 16:00,,PT_Normal,,,,,dZJSMEXVSwqSAFURtfaQbg,iIx63neXRUye+q/9yz5B8w,,,N,0,0,,,2011-11-20 13:37,2011-11-20 14:07,admin,admin
36,85205,1180,11279,841,1,0,N,N,N,CP_Drtn,TT_Task,DT_FixedDUR2,RV_OK,TK_NotStart,MT-1010,Steel doors&hardware submittal,,176,0,16,0,0,0,16,0,0,0,,,,2011-12-11 08:00,2011-12-12 16:00,,2011-11-14 08:00,2011-11-15 16:00,2011-11-14 08:00,2011-11-15 16:00,2011-11-14 08:00,2011-11-15 16:00,,2011-12-11 08:00,2011-12-12 16:00,,PT_Normal,,,,,fR3m3h/bQiWMiBbaoDcLvA,TWgA69LaOUib4zdo+47MRQ,,,N,0,0,,,2011-11-20 13:37,2011-11-20 14:06,admin,admin
37,85206,1180,11280,841,1,0,N,N,N,CP_Drtn,TT_Task,DT_FixedDUR2,RV_OK,TK_NotStart,MT-1120,Steel doors&hardware approval,,176,176,16,0,0,0,16,0,0,0,,,,2011-12-27 08:00,2011-12-28 16:00,,2011-12-01 08:00,2011-12-03 16:00,2011-12-01 08:00,2011-12-03 16:00,2011-12-01 08:00,2011-12-03 16:00,,2011-12-27 08:00,2011-12-28 16:00,,PT_Normal,,,,,jlU7fTzoRkeXlbGTdQ8Oog,JVYuWWbYFkKKuGYkgoxYHw,,,N,0,0,,,2011-11-20 13:37,2011-11-20 14:07,admin,admin
38,85207,1180,11279,841,1,0,N,N,N,CP_Drtn,TT_Task,DT_FixedDUR2,RV_OK,TK_NotStart,MT-1240,Steel ladder submittal,,304,0,24,0,0,0,24,0,0,0,,,,2012-03-27 08:00,2012-03-29 16:00,,2012-02-12 08:00,2012-02-14 16:00,2012-02-12 08:00,2012-02-14 16:00,2012-02-12 08:00,2012-02-14 16:00,,2012-03-27 08:00,2012-03-29 16:00,,PT_Normal,,,,,6g2EXi+RSW29vddtp8+jiQ,SOGwtvnb7k6IwMshJeUSKw,,,N,0,0,,,2011-11-20 13:37,2011-11-20 14:06,admin,admin
39,85208,1180,11280,841,1,0,N,N,N,CP_Drtn,TT_Task,DT_FixedDUR2,RV_OK,TK_NotStart,MT-1250,Steel ladder approval,,304,0,24,0,0,0,24,0,0,0,,,,2012-04-12 08:00,2012-04-15 16:00,,2012-02-28 08:00,2012-03-01 16:00,2012-02-28 08:00,2012-03-01 16:00,2012-02-28 08:00,2012-03-01 16:00,,2012-04-12 08:00,2012-04-15 16:00,,PT_Normal,,,,,SV45AX/6QGG0yqFzMqaEaw,4NJh3d8v/E+EbuJyRjBzWg,,,N,0,0,,,2011-11-20 13:37,2011-11-20 14:07,admin,admin
40,85209,1180,11279,841,1,0,N,N,N,CP_Drtn,TT_Task,DT_FixedDUR2,RV_OK,TK_NotStart,MT-1360,Epoxy submittal,,64,0,24,0,0,0,24,0,0,0,,,,2012-02-21 08:00,2012-02-23 16:00,,2012-02-12 08:00,2012-02-14 16:00,2012-02-12 08:00,2012-02-14 16:00,2012-02-12 08:00,2012-02-14 16:00,,2012-02-21 08:00,2012-02-23 16:00,,PT_Normal,,,,,qnIKZV7cQLi19/cdKndgnw,SOGwtvnb7k6IwMshJeUSKw,,,N,0,0,,,2011-11-20 13:37,2011-11-20 14:06,admin,admin
41,85210,1180,11280,841,1,0,N,N,N,CP_Drtn,TT_Task,DT_FixedDUR2,RV_OK,TK_NotStart,MT-1370,Epoxy approval,,64,0,24,0,0,0,24,0,0,0,,,,2012-03-08 08:00,2012-03-11 16:00,,2012-02-28 08:00,2012-03-01 16:00,2012-02-28 08:00,2012-03-01 16:00,2012-02-28 08:00,2012-03-01 16:00,,2012-03-08 08:00,2012-03-11 16:00,,PT_Normal,,,,,7DeZiMqxSB+HizFOc3ToOQ,4NJh3d8v/E+EbuJyRjBzWg,,,N,0,0,,,2011-11-20 13:37,2011-11-20 14:07,admin,admin
42,85211,1180,11279,841,1,0,N,N,N,CP_Drtn,TT_Task,DT_FixedDUR2,RV_OK,TK_NotStart,MT-1340,Acrylic paint submittal,,208,0,24,0,0,0,24,0,0,0,,,,2012-03-25 08:00,2012-03-27 16:00,,2012-02-23 08:00,2012-02-26 16:00,2012-02-23 08:00,2012-02-26 16:00,2012-02-23 08:00,2012-02-26 16:00,,2012-03-25 08:00,2012-03-27 16:00,,PT_Normal,,,,,rlfqLsZLR6qMWXBJTFbF9Q,SOGwtvnb7k6IwMshJeUSKw,,,N,0,0,,,2011-11-20 13:37,2011-11-20 14:06,admin,admin
43,85212,1180,11280,841,1,0,N,N,N,CP_Drtn,TT_Task,DT_FixedDUR2,RV_OK,TK_NotStart,MT-1350,Acrylic paint approval,,208,160,24,0,0,0,24,0,0,0,,,,2012-04-10 08:00,2012-04-12 16:00,,2012-03-11 08:00,2012-03-13 16:00,2012-03-11 08:00,2012-03-13 16:00,2012-03-11 08:00,2012-03-13 16:00,,2012-04-10 08:00,2012-04-12 16:00,,PT_Normal,,,,,0gBk4IcpQYOxwdTbdfg4cA,4NJh3d8v/E+EbuJyRjBzWg,,,N,0,0,,,2011-11-20 13:37,2011-11-20 14:07,admin,admin
44,85213,1180,11279,841,1,0,N,N,N,CP_Drtn,TT_Task,DT_FixedDUR2,RV_OK,TK_NotStart,MT-1320,Sand trap louvers submittal,,184,0,24,0,0,0,24,0,0,0,,,,2012-03-21 08:00,2012-03-24 16:00,,2012-02-23 08:00,2012-02-26 16:00,2012-02-23 08:00,2012-02-26 16:00,2012-02-23 08:00,2012-02-26 16:00,,2012-03-21 08:00,2012-03-24 16:00,,PT_Normal,,,,,qDlynHSqT4iF8P3vf0M6uw,SOGwtvnb7k6IwMshJeUSKw,,,N,0,0,,,2011-11-20 13:37,2011-11-20 14:06,admin,admin
45,85214,1180,11280,841,1,0,N,N,N,CP_Drtn,TT_Task,DT_FixedDUR2,RV_OK,TK_NotStart,MT-1330,Sand trap louvers approval,,184,72,24,0,0,0,24,0,0,0,,,,2012-04-07 08:00,2012-04-09 16:00,,2012-03-11 08:00,2012-03-13 16:00,2012-03-11 08:00,2012-03-13 16:00,2012-03-11 08:00,2012-03-13 16:00,,2012-04-07 08:00,2012-04-09 16:00,,PT_Normal,,,,,jq3z5kFwRtWjNdzLXjn/eA,4NJh3d8v/E+EbuJyRjBzWg,,,N,0,0,,,2011-11-20 13:37,2011-11-20 14:07,admin,admin
46,85215,1180,11279,841,1,0,N,N,N,CP_Drtn,TT_Task,DT_FixedDUR2,RV_OK,TK_NotStart,MT-1220,Masonry submittal,,216,0,24,0,0,0,24,0,0,0,,,,2012-01-04 08:00,2012-01-07 16:00,,2011-12-04 08:00,2011-12-06 16:00,2011-12-04 08:00,2011-12-06 16:00,2011-12-04 08:00,2011-12-06 16:00,,2012-01-04 08:00,2012-01-07 16:00,,PT_Normal,,,,,0n6rR5IbRf+aKTi5a6tHsA,SOGwtvnb7k6IwMshJeUSKw,,,N,0,0,,,2011-11-20 13:37,2011-11-20 14:06,admin,admin
47,85216,1180,11280,841,1,0,N,N,N,CP_Drtn,TT_Task,DT_FixedDUR2,RV_OK,TK_NotStart,MT-1230,Masonry approval,,216,152,24,0,0,0,24,0,0,0,,,,2012-01-21 08:00,2012-01-23 16:00,,2011-12-20 08:00,2011-12-22 16:00,2011-12-20 08:00,2011-12-22 16:00,2011-12-20 08:00,2011-12-22 16:00,,2012-01-21 08:00,2012-01-23 16:00,,PT_Normal,,,,,d4cIlBeeRF+fpsO9ndj7VA,4NJh3d8v/E+EbuJyRjBzWg,,,N,0,0,,,2011-11-20 13:37,2011-11-20 14:07,admin,admin
48,85217,1180,11279,841,1,0,N,N,N,CP_Drtn,TT_Task,DT_FixedDUR2,RV_OK,TK_NotStart,MT-1260,Polyethylene submittal,,368,0,24,0,0,0,24,0,0,0,,,,2012-01-26 08:00,2012-01-29 16:00,,2011-12-04 08:00,2011-12-06 16:00,2011-12-04 08:00,2011-12-06 16:00,2011-12-04 08:00,2011-12-06 16:00,,2012-01-26 08:00,2012-01-29 16:00,,PT_Normal,,,,,NnNeXjk4SEKZ/8CD5tQoPQ,SOGwtvnb7k6IwMshJeUSKw,,,N,0,0,,,2011-11-20 13:37,2011-11-20 14:06,admin,admin
49,85218,1180,11280,841,1,0,N,N,N,CP_Drtn,TT_Task,DT_FixedDUR2,RV_OK,TK_NotStart,MT-1270,Polyethylene approval,,368,368,24,0,0,0,24,0,0,0,,,,2012-02-12 08:00,2012-02-14 16:00,,2011-12-20 08:00,2011-12-22 16:00,2011-12-20 08:00,2011-12-22 16:00,2011-12-20 08:00,2011-12-22 16:00,,2012-02-12 08:00,2012-02-14 16:00,,PT_Normal,,,,,v7Sd/ewGR226Tz4rjX7IVw,4NJh3d8v/E+EbuJyRjBzWg,,,N,0,0,,,2011-11-20 13:37,2011-11-20 14:07,admin,admin
50,85219,1180,11279,841,1,0,N,N,N,CP_Drtn,TT_Task,DT_FixedDUR2,RV_OK,TK_NotStart,MT-1280,Polyurethane floors submittal,,48,0,24,0,0,0,24,0,0,0,,,,2011-12-17 08:00,2011-12-19 16:00,,2011-12-10 08:00,2011-12-12 16:00,2011-12-10 08:00,2011-12-12 16:00,2011-12-10 08:00,2011-12-12 16:00,,2011-12-17 08:00,2011-12-19 16:00,,PT_Normal,,,,,goKqbjEyQhqXJnrD+lXkeQ,SOGwtvnb7k6IwMshJeUSKw,,,N,0,0,,,2011-11-20 13:37,2011-11-20 14:06,admin,admin
51,85220,1180,11280,841,1,0,N,N,N,CP_Drtn,TT_Task,DT_FixedDUR2,RV_OK,TK_NotStart,MT-1290,Polyurethane floors approval,,48,0,24,0,0,0,24,0,0,0,,,,2012-01-02 08:00,2012-01-04 16:00,,2011-12-26 08:00,2011-12-28 16:00,2011-12-26 08:00,2011-12-28 16:00,2011-12-26 08:00,2011-12-28 16:00,,2012-01-02 08:00,2012-01-04 16:00,,PT_Normal,,,,,S6e2GDx8RU+DpEeYhBW1RA,4NJh3d8v/E+EbuJyRjBzWg,,,N,0,0,,,2011-11-20 13:37,2011-11-20 14:07,admin,admin
52,85221,1180,11279,841,1,0,N,N,N,CP_Drtn,TT_Task,DT_FixedDUR2,RV_OK,TK_NotStart,MT-1300,Polystyrene sheet submittal,,744,0,24,0,0,0,24,0,0,0,,,,2012-04-02 08:00,2012-04-04 16:00,,2011-12-15 08:00,2011-12-18 16:00,2011-12-15 08:00,2011-12-18 16:00,2011-12-15 08:00,2011-12-18 16:00,,2012-04-02 08:00,2012-04-04 16:00,,PT_Normal,,,,,Q/1XNhWxT7SqOXyvwHqmYQ,SOGwtvnb7k6IwMshJeUSKw,,,N,0,0,,,2011-11-20 13:37,2011-11-20 14:06,admin,admin
53,85222,1180,11280,841,1,0,N,N,N,CP_Drtn,TT_Task,DT_FixedDUR2,RV_OK,TK_NotStart,MT-1310,Polystyrene sheet approval,,744,640,24,0,0,0,24,0,0,0,,,,2012-04-18 08:00,2012-04-21 16:00,,2012-01-01 08:00,2012-01-03 16:00,2012-01-01 08:00,2012-01-03 16:00,2012-01-01 08:00,2012-01-03 16:00,,2012-04-18 08:00,2012-04-21 16:00,,PT_Normal,,,,,/gsmlJdsT2ykCEBTgyvZ/Q,4NJh3d8v/E+EbuJyRjBzWg,,,N,0,0,,,2011-11-20 13:37,2011-11-20 14:07,admin,admin
54,85223,1180,11279,841,1,0,N,N,N,CP_Drtn,TT_Task,DT_FixedDUR2,RV_OK,TK_NotStart,MT-1110,Rain water gutter submittal,,424,0,16,0,0,0,16,0,0,0,,,,2012-03-21 08:00,2012-03-22 16:00,,2012-01-19 08:00,2012-01-21 16:00,2012-01-19 08:00,2012-01-21 16:00,2012-01-19 08:00,2012-01-21 16:00,,2012-03-21 08:00,2012-03-22 16:00,,PT_Normal,,,,,TUFaPqflQ5OuXtFsOa/Uww,Muzq1Pe6jUCrvWeDsHDDbg,,,N,0,0,,,2011-11-20 13:37,2011-11-20 14:06,admin,admin
55,85224,1180,11280,841,1,0,N,N,N,CP_Drtn,TT_Task,DT_FixedDUR2,RV_OK,TK_NotStart,MT-1210,Rain water gutter approval,,424,280,16,0,0,0,16,0,0,0,,,,2012-04-07 08:00,2012-04-08 16:00,,2012-02-05 08:00,2012-02-06 16:00,2012-02-05 08:00,2012-02-06 16:00,2012-02-05 08:00,2012-02-06 16:00,,2012-04-07 08:00,2012-04-08 16:00,,PT_Normal,,,,,uwK4IlqtTbiHAoO3rLGc1Q,iIx63neXRUye+q/9yz5B8w,,,N,0,0,,,2011-11-20 13:37,2011-11-20 14:07,admin,admin
56,85225,1180,11246,841,0,0,N,N,N,CP_Drtn,TT_Mile,DT_FixedDrtn,RV_OK,TK_NotStart,Ms 105,Site handing over to the contractor,,0,0,0,0,0,0,0,0,0,0,2011-09-17 08:00,,,2011-09-17 08:00,2011-09-17 08:00,,2011-09-17 08:00,2011-09-17 08:00,2011-09-17 08:00,2011-09-17 08:00,2011-09-17 08:00,2011-09-17 08:00,,2011-09-17 08:00,2011-09-17 08:00,CS_MSO,PT_Normal,,,,,kJL6Usl5QvyfuZfrIB9soA,,,,Y,0,0,,,2011-11-20 13:37,2011-11-20 13:37,admin,admin
57,85226,1180,11246,841,0,0,N,N,N,CP_Drtn,TT_Mile,DT_FixedDrtn,RV_OK,TK_NotStart,Ms 106,Contract agreement(to be verified),,0,0,0,0,0,0,0,0,0,0,,,,2011-11-09 08:00,2011-11-09 08:00,,2011-11-09 08:00,2011-11-09 08:00,2011-11-09 08:00,2011-11-09 08:00,2011-11-09 08:00,2011-11-09 08:00,,2011-11-09 08:00,2011-11-09 08:00,,PT_Normal,,,,,4B2Xy//nTMeXv1p75x1F9w,,,,Y,0,0,,,2011-11-20 13:37,2011-11-20 13:37,admin,admin
58,85227,1180,11246,841,0,0,N,N,N,CP_Drtn,TT_Mile,DT_FixedDrtn,RV_OK,TK_NotStart,Ms 107,Receive advanced payment,,0,0,0,0,0,0,0,0,0,0,,,,2011-11-09 08:00,2011-11-09 08:00,,2011-11-09 08:00,2011-11-09 08:00,2011-11-09 08:00,2011-11-09 08:00,2011-11-09 08:00,2011-11-09 08:00,,2011-11-09 08:00,2011-11-09 08:00,,PT_Normal,,,,,TN8BslLVROW+cnO4WVXdzQ,,,,Y,0,0,,,2011-11-20 13:37,2011-11-20 13:37,admin,admin
59,85228,1180,11246,841,1,0,N,N,N,CP_Drtn,TT_Task,DT_FixedDUR2,RV_OK,TK_NotStart,Ms 210,Demobilization & Dismantling all temporary facilities,,0,0,16,0,0,0,16,0,0,0,,,,2012-05-07 08:00,2012-05-08 16:00,,2012-05-07 08:00,2012-05-08 16:00,2012-05-07 08:00,2012-05-08 16:00,2012-05-07 08:00,2012-05-08 16:00,,2012-05-07 08:00,2012-05-08 16:00,,PT_Normal,,,,,Cfy/GJ0yRuW3BpqxSnAMGg,,,,Y,0,0,,,2011-11-20 13:37,2011-11-20 13:37,admin,admin
60,85229,1180,11246,841,0,0,N,N,N,CP_Drtn,TT_Mile,DT_FixedDrtn,RV_OK,TK_NotStart,Ms 108,Commencement date(receive advanced payment),,0,0,0,0,0,0,0,0,0,0,,,,2011-11-09 08:00,2011-11-09 08:00,,2011-11-09 08:00,2011-11-09 08:00,2011-11-09 08:00,2011-11-09 08:00,2011-11-09 08:00,2011-11-09 08:00,,2011-11-09 08:00,2011-11-09 08:00,,PT_Normal,,,,,to8NJKw+Qu27BwUNd3fdjQ,W2mC3VMFx0aaA1fISCa4IA,,,Y,0,0,,,2011-11-20 13:37,2011-11-20 13:37,admin,admin
61,85230,1180,11246,841,1,0,N,N,N,CP_Drtn,TT_Task,DT_FixedDUR2,RV_OK,TK_NotStart,Ms 110,Mobilization & temporary facilities,,0,0,96,0,0,0,96,0,0,0,,,,2011-11-09 08:00,2011-11-22 16:00,,2011-11-09 08:00,2011-11-22 16:00,2011-11-09 08:00,2011-11-22 16:00,2011-11-09 08:00,2011-11-22 16:00,,2011-11-09 08:00,2011-11-22 16:00,,PT_Normal,,,,,3tuBRKqOTVuy1wY7MNiDWg,,,,Y,0,0,,,2011-11-20 13:37,2011-11-20 13:37,admin,admin
62,85231,1180,11246,841,0,0,N,N,N,CP_Drtn,TT_FinMile,DT_FixedDrtn,RV_OK,TK_NotStart,Ms 160,Juice preparation finish dates,,16,16,0,0,0,0,0,0,0,0,,,,2012-05-08 16:00,2012-05-08 16:00,,2012-05-06 16:00,2012-05-06 16:00,2012-05-06 16:00,2012-05-06 16:00,2012-05-06 16:00,2012-05-06 16:00,,2012-05-08 16:00,2012-05-08 16:00,,PT_Normal,,,,,3OkU4IAATs2Nj8b6VQ34Lg,,,,N,0,0,,,2011-11-20 13:37,2011-11-20 13:37,admin,admin
63,85232,1180,11246,841,0,0,N,N,N,CP_Drtn,TT_FinMile,DT_FixedDrtn,RV_OK,TK_NotStart,Ms 170,Pet filling finish date,,0,0,0,0,0,0,0,0,0,0,,,,2012-05-08 16:00,2012-05-08 16:00,,2012-05-08 16:00,2012-05-08 16:00,2012-05-08 16:00,2012-05-08 16:00,2012-05-08 16:00,2012-05-08 16:00,,2012-05-08 16:00,2012-05-08 16:00,,PT_Normal,,,,,q2GeRgUVQB6BjFoxptxewA,,,,Y,0,0,,,2011-11-20 13:37,2011-11-20 13:37,admin,admin
64,85233,1180,11246,841,0,0,N,N,N,CP_Drtn,TT_FinMile,DT_FixedDrtn,RV_OK,TK_NotStart,Ms 180,Snag list finish dates,,0,0,0,0,0,0,0,0,0,0,,,,2012-05-08 16:00,2012-05-08 16:00,,2012-05-08 16:00,2012-05-08 16:00,2012-05-08 16:00,2012-05-08 16:00,2012-05-08 16:00,2012-05-08 16:00,,2012-05-08 16:00,2012-05-08 16:00,,PT_Normal,,,,,6U1mEOy1SsilhBIVS7AwuA,,,,Y,0,0,,,2011-11-20 13:37,2011-11-20 13:37,admin,admin
65,85234,1180,11246,841,0,0,N,N,N,CP_Drtn,TT_FinMile,DT_FixedDrtn,RV_OK,TK_NotStart,Ms 120,As built drawings,,0,0,0,0,0,0,0,0,0,0,,,,2012-05-08 16:00,2012-05-08 16:00,,2012-05-08 16:00,2012-05-08 16:00,2012-05-08 16:00,2012-05-08 16:00,2012-05-08 16:00,2012-05-08 16:00,,2012-05-08 16:00,2012-05-08 16:00,,PT_Normal,,,,,bfMdCm30Rp2lC57RqMeJCA,,,,Y,0,0,,,2011-11-20 13:37,2011-11-20 13:37,admin,admin
66,85235,1180,11246,841,1,0,N,N,N,CP_Drtn,TT_Task,DT_FixedDUR2,RV_OK,TK_NotStart,Ms 190,Soil Investigation Report,,152,152,120,0,0,0,120,0,0,0,,,,2011-12-17 08:00,2012-01-02 16:00,,2011-11-23 08:00,2011-12-11 16:00,2011-11-23 08:00,2011-12-11 16:00,2011-11-23 08:00,2011-12-11 16:00,,2011-12-17 08:00,2012-01-02 16:00,,PT_Normal,,,,,aTPq/Hf8R0+LojN7WNw3EQ,,,,N,0,0,,,2011-11-20 13:37,2011-11-20 13:37,admin,admin
67,85236,1180,11246,841,1,0,N,N,N,CP_Drtn,TT_Task,DT_FixedDUR2,RV_OK,TK_NotStart,Ms 111,Site survey,,0,0,56,0,0,0,56,0,0,0,,,,2011-11-23 08:00,2011-12-01 16:00,,2011-11-23 08:00,2011-12-01 16:00,2011-11-23 08:00,2011-12-01 16:00,2011-11-23 08:00,2011-12-01 16:00,,2011-11-23 08:00,2011-12-01 16:00,,PT_Normal,,,,,Z2z0PubaS5uoxcxfg1YCpA,,,,Y,0,0,,,2011-11-20 13:37,2011-11-20 13:37,admin,admin
68,85237,1180,11246,841,0,0,N,N,N,CP_Drtn,TT_FinMile,DT_FixedDrtn,RV_OK,TK_NotStart,Ms 130,UHT FINISH DATE,,0,0,0,0,0,0,0,0,0,0,,,,2012-04-25 16:00,2012-04-25 16:00,,2012-04-25 16:00,2012-04-25 16:00,2012-04-25 16:00,2012-04-25 16:00,2012-04-25 16:00,2012-04-25 16:00,,2012-04-25 16:00,2012-04-25 16:00,,PT_Normal,,,,,2GJLGrgmTuONj+YCz6pe5Q,,,,Y,0,0,,,2011-11-20 13:37,2011-11-20 13:37,admin,admin
69,85238,1180,11246,841,0,0,N,N,N,CP_Drtn,TT_FinMile,DT_FixedDrtn,RV_OK,TK_NotStart,Ms 200,Project completion & final handing over,,0,0,0,0,0,0,0,0,0,0,,,,2012-05-08 16:00,2012-05-08 16:00,,2012-05-08 16:00,2012-05-08 16:00,2012-05-08 16:00,2012-05-08 16:00,2012-05-08 16:00,2012-05-08 16:00,,2012-05-08 16:00,2012-05-08 16:00,,PT_Normal,,,,,LQRbdxdXRPeTXbix+RGHmA,,,,Y,0,0,,,2011-11-20 13:37,2011-11-20 13:37,admin,admin
70,85239,1180,11246,841,0,0,N,N,N,CP_Drtn,TT_Mile,DT_FixedDrtn,RV_OK,TK_NotStart,Ms 100,Letter of Acceptance,,0,0,0,0,0,0,0,0,0,0,,,,2011-08-25 08:00,2011-08-25 08:00,,2011-08-25 08:00,2011-08-25 08:00,2011-08-25 08:00,2011-08-25 08:00,2011-08-25 08:00,2011-08-25 08:00,,2011-08-25 08:00,2011-08-25 08:00,,PT_Normal,,,,,6EHyq5DITQWCQ7qMVctqYQ,,,,Y,0,0,,,2011-11-20 13:37,2011-11-20 13:37,admin,admin
71,85240,1180,11247,841,1,0,N,N,N,CP_Drtn,TT_Task,DT_FixedDUR2,RV_OK,TK_NotStart,QA 001,Internal quality audit #1,,800,800,56,0,0,0,56,0,0,0,,,,2012-05-01 08:00,2012-05-08 16:00,,2012-01-05 08:00,2012-01-12 16:00,2012-01-05 08:00,2012-01-12 16:00,2012-01-05 08:00,2012-01-12 16:00,,2012-05-01 08:00,2012-05-08 16:00,,PT_Normal,,,,,esM/MU5tQviZCPPCWkvS1w,,,,N,0,0,,,2011-11-20 13:37,2011-11-20 13:37,admin,admin
72,85241,1180,11247,841,1,0,N,N,N,CP_Drtn,TT_Task,DT_FixedDUR2,RV_OK,TK_NotStart,QA 002,Internal quality audit #2,,184,184,56,0,0,0,56,0,0,0,,,,2012-05-01 08:00,2012-05-08 16:00,,2012-04-04 08:00,2012-04-11 16:00,2012-04-04 08:00,2012-04-11 16:00,2012-04-04 08:00,2012-04-11 16:00,,2012-05-01 08:00,2012-05-08 16:00,,PT_Normal,,,,,Q+j7wvaFQIeI2+jCOtPMQg,,,,N,0,0,,,2011-11-20 13:37,2011-11-20 13:37,admin,admin
73,85242,1180,11250,841,1,0,N,N,N,CP_Drtn,TT_Task,DT_FixedDUR2,RV_OK,TK_NotStart,JP-C100,Demolishing Slab on Grade,,16,0,56,0,0,0,56,0,0,0,,,,2011-11-30 08:00,2011-12-07 16:00,,2011-11-28 08:00,2011-12-05 16:00,2011-11-28 08:00,2011-12-05 16:00,2011-11-28 08:00,2011-12-05 16:00,,2011-11-30 08:00,2011-12-07 16:00,,PT_Normal,,,,,IvbSjxgnRzqIhlWoARWdNQ,mgq7N9akDUaPYyuTBZxZwg,,,N,0,0,,,2011-11-20 13:37,2011-11-20 13:37,admin,admin
74,85243,1180,11250,841,1,0,N,N,N,CP_Drtn,TT_Task,DT_FixedDUR2,RV_OK,TK_NotStart,JP-C120,Excavation,,16,0,96,0,0,0,96,0,0,0,,,,2011-12-15 08:00,2011-12-28 16:00,,2011-12-13 08:00,2011-12-26 16:00,2011-12-13 08:00,2011-12-26 16:00,2011-12-13 08:00,2011-12-26 16:00,,2011-12-15 08:00,2011-12-28 16:00,,PT_Normal,,,,,OvrIFeBMSbSl5QubEwvmrQ,3nrHN/97jEGTpT0tIRRqpQ,,,N,0,0,,,2011-11-20 13:37,2011-11-20 13:37,admin,admin
75,85244,1180,11250,841,1,0,N,N,N,CP_Drtn,TT_Task,DT_FixedDUR2,RV_OK,TK_NotStart,JP-C130,Demolishing Footing and Tie Beam,,16,0,56,0,0,0,56,0,0,0,,,,2011-12-29 08:00,2012-01-05 16:00,,2011-12-27 08:00,2012-01-03 16:00,2011-12-27 08:00,2012-01-03 16:00,2011-12-27 08:00,2012-01-03 16:00,,2011-12-29 08:00,2012-01-05 16:00,,PT_Normal,,,,,d9xNqnjVSWuaKirqsjGaNQ,PmT0EnHFx0u3f5eNIdhz9w,,,N,0,0,,,2011-11-20 13:37,2011-11-20 13:37,admin,admin
76,85245,1180,11250,841,1,0,N,N,N,CP_Drtn,TT_Task,DT_FixedDUR2,RV_OK,TK_NotStart,JP-C140,Replacement & back fill Under Footing,,16,0,80,0,0,0,80,0,0,0,,,,2012-01-07 08:00,2012-01-17 16:00,,2012-01-04 08:00,2012-01-15 16:00,2012-01-04 08:00,2012-01-15 16:00,2012-01-04 08:00,2012-01-15 16:00,,2012-01-07 08:00,2012-01-17 16:00,,PT_Normal,,,,,rXTK2sKFS5OiDsUhrudFIQ,,,,N,0,0,,,2011-11-20 13:37,2011-11-20 13:37,admin,admin
77,85246,1180,11250,841,1,0,N,N,N,CP_Drtn,TT_Task,DT_FixedDUR2,RV_OK,TK_NotStart,JP-C150,Plain concrete 100 under footings,2104,16,0,24,0,66,66,24,0,0,0,,,,2012-01-18 08:00,2012-01-21 16:00,,2012-01-16 08:00,2012-01-18 16:00,2012-01-16 08:00,2012-01-18 16:00,2012-01-16 08:00,2012-01-18 16:00,,2012-01-18 08:00,2012-01-21 16:00,,PT_Normal,,,,,+aApZEJcTSOArlZxCzfk1Q,,,,N,0,0,,,2011-11-20 13:37,2011-11-20 13:37,admin,admin
78,85247,1180,11250,841,1,0,N,N,N,CP_Drtn,TT_Task,DT_FixedDUR2,RV_OK,TK_NotStart,JP-C160,R.C. for footings & tie beams,2103,16,0,56,0,67,67,56,0,0,0,,,,2012-01-22 08:00,2012-01-29 16:00,,2012-01-19 08:00,2012-01-26 16:00,2012-01-19 08:00,2012-01-26 16:00,2012-01-19 08:00,2012-01-26 16:00,,2012-01-22 08:00,2012-01-29 16:00,,PT_Normal,,,,,AITZ2kS/SmKzJb+Hjumb1g,,,,N,0,0,,,2011-11-20 13:37,2011-11-20 13:37,admin,admin
79,85248,1180,11250,841,1,0,N,N,N,CP_Drtn,TT_Task,DT_FixedDUR2,RV_OK,TK_NotStart,JP-C200,Steel structure erection,,16,0,200,0,0,0,200,0,0,0,,,,2012-02-22 08:00,2012-03-21 16:00,,2012-02-20 08:00,2012-03-19 16:00,2012-02-20 08:00,2012-03-19 16:00,2012-02-20 08:00,2012-03-19 16:00,,2012-02-22 08:00,2012-03-21 16:00,,PT_Normal,,,,,DpXTgfoMS3C8/Ebm1Eyxew,,,,N,0,0,,,2011-11-20 13:37,2011-11-20 13:37,admin,admin
80,85249,1180,11250,841,1,0,N,N,N,CP_Drtn,TT_Task,DT_FixedDUR2,RV_OK,TK_NotStart,JP-C190,Soil replacement under slab on grade,,16,0,56,0,0,0,56,0,0,0,,,,2012-02-08 08:00,2012-02-15 16:00,,2012-02-06 08:00,2012-02-13 16:00,2012-02-06 08:00,2012-02-13 16:00,2012-02-06 08:00,2012-02-13 16:00,,2012-02-08 08:00,2012-02-15 16:00,,PT_Normal,,,,,fglXIR+ZR+2SK8gBiEKafw,,,,N,0,0,,,2011-11-20 13:37,2011-11-20 13:37,admin,admin
81,85250,1180,11250,841,1,0,N,N,N,CP_Drtn,TT_Task,DT_FixedDUR2,RV_OK,TK_NotStart,JP-C210,Slab On Grade,,16,0,40,0,0,0,40,0,0,0,,,,2012-02-16 08:00,2012-02-21 16:00,,2012-02-14 08:00,2012-02-19 16:00,2012-02-14 08:00,2012-02-19 16:00,2012-02-14 08:00,2012-02-19 16:00,,2012-02-16 08:00,2012-02-21 16:00,,PT_Normal,,,,,k5YWgWgxTDmKvQtSdto4Mw,,,,N,0,0,,,2011-11-20 13:37,2011-11-20 13:37,admin,admin
82,85251,1180,11250,841,1,0,N,N,N,CP_Drtn,TT_Task,DT_FixedDUR2,RV_OK,TK_NotStart,JP-C220,Concrete Screed,,112,0,80,0,0,0,80,0,0,0,,,,2012-04-05 08:00,2012-04-16 16:00,,2012-03-20 08:00,2012-03-31 16:00,2012-03-20 08:00,2012-03-31 16:00,2012-03-20 08:00,2012-03-31 16:00,,2012-04-05 08:00,2012-04-16 16:00,,PT_Normal,,,,,5FP1YzJDQ6W9inzIy+pWZg,,,,N,0,0,,,2011-11-20 13:37,2011-11-20 13:37,admin,admin
83,85252,1180,11250,841,1,0,N,N,N,CP_Drtn,TT_Task,DT_FixedDUR2,RV_OK,TK_NotStart,JP-C170,R.c for pedestals,,16,0,64,0,0,0,64,0,0,0,,,,2012-01-30 08:00,2012-02-07 16:00,,2012-01-28 08:00,2012-02-05 16:00,2012-01-28 08:00,2012-02-05 16:00,2012-01-28 08:00,2012-02-05 16:00,,2012-01-30 08:00,2012-02-07 16:00,,PT_Normal,,,,,5Uj64C87QA6ZZp6edPjBvw,,,,N,0,0,,,2011-11-20 13:37,2011-11-20 13:37,admin,admin
84,85253,1180,11250,841,1,0,N,N,N,CP_Drtn,TT_Task,DT_FixedDUR2,RV_OK,TK_NotStart,JP-A160,RC for deck floors,,88,0,56,0,0,0,56,0,0,0,,,,2012-04-14 08:00,2012-04-21 16:00,,2012-04-01 08:00,2012-04-08 16:00,2012-04-01 08:00,2012-04-08 16:00,2012-04-01 08:00,2012-04-08 16:00,,2012-04-14 08:00,2012-04-21 16:00,,PT_Normal,,,,,tbvG4rmmSvm0zvGaQ6JNEg,,,,N,0,0,,,2011-11-20 13:37,2011-11-20 13:37,admin,admin
85,85254,1180,11250,841,1,0,N,N,N,CP_Drtn,TT_Task,DT_FixedDUR2,RV_OK,TK_NotStart,JP-A170,Roof R.c slab,,104,0,40,0,0,0,40,0,0,0,,,,2012-04-16 08:00,2012-04-21 16:00,,2012-04-01 08:00,2012-04-05 16:00,2012-04-01 08:00,2012-04-05 16:00,2012-04-01 08:00,2012-04-05 16:00,,2012-04-16 08:00,2012-04-21 16:00,,PT_Normal,,,,,UWtZeo3KRVSytvc/WTIGxQ,,,,N,0,0,,,2011-11-20 13:37,2011-11-20 13:37,admin,admin
86,85255,1180,11250,841,1,0,N,N,N,CP_Drtn,TT_Task,DT_FixedDUR2,RV_OK,TK_NotStart,JP-C180,Anchors for steel structure,,112,96,48,0,0,0,48,0,0,0,,,,2012-02-15 08:00,2012-02-21 16:00,,2012-01-30 08:00,2012-02-05 16:00,2012-01-30 08:00,2012-02-05 16:00,2012-01-30 08:00,2012-02-05 16:00,,2012-02-15 08:00,2012-02-21 16:00,,PT_Normal,,,,,vsjPs/PITY6K7fgLh4yJAw,,,,N,0,0,,,2011-11-20 13:37,2011-11-20 13:37,admin,admin
87,85256,1180,11250,841,1,0,N,N,N,CP_Drtn,TT_Task,DT_FixedDUR2,RV_OK,TK_NotStart,JP-C110,Utilities diversion(plumbing),,16,0,64,0,0,0,64,0,0,0,,,,2011-12-08 08:00,2011-12-17 16:00,,2011-12-06 08:00,2011-12-14 16:00,2011-12-06 08:00,2011-12-14 16:00,2011-12-06 08:00,2011-12-14 16:00,,2011-12-08 08:00,2011-12-17 16:00,,PT_Normal,,,,,7bxfvrNrQfWa1Vu8BOJKcA,,,,N,0,0,,,2011-11-20 13:37,2011-11-20 13:37,admin,admin
88,85257,1180,11250,841,1,0,N,N,N,CP_Drtn,TT_Task,DT_FixedDUR2,RV_OK,TK_NotStart,JP-C230,Footings insulation/water proofing,,624,624,16,0,0,0,16,0,0,0,,,,2012-05-07 08:00,2012-05-08 16:00,,2012-02-06 08:00,2012-02-07 16:00,2012-02-06 08:00,2012-02-07 16:00,2012-02-06 08:00,2012-02-07 16:00,,2012-05-07 08:00,2012-05-08 16:00,,PT_Normal,,,,,vfONOH76Ru636J9N1d80bw,,,,N,0,0,,,2011-11-20 13:37,2011-11-20 13:37,admin,admin
89,85258,1180,11250,841,1,0,N,N,N,CP_Drtn,TT_Task,DT_FixedDUR2,RV_OK,TK_NotStart,JP-C240,Concrete guard base,,192,144,80,0,0,0,80,0,0,0,,,,2012-04-17 08:00,2012-04-28 16:00,,2012-03-20 08:00,2012-03-31 16:00,2012-03-20 08:00,2012-03-31 16:00,2012-03-20 08:00,2012-03-31 16:00,,2012-04-17 08:00,2012-04-28 16:00,,PT_Normal,,,,,rGdlYhxNT1SFKpliP4ZpYw,,,,N,0,0,,,2011-11-20 13:37,2011-11-20 13:37,admin,admin
90,85259,1180,11251,841,1,0,N,N,N,CP_Drtn,TT_Rsrc,DT_FixedDUR2,RV_OK,TK_NotStart,JP-A350,Over head sectional Door erection,,64,0,96,0,0,0,96,0,0,0,,,,2012-04-15 08:00,2012-04-28 16:00,,2012-04-05 08:00,2012-04-18 16:00,2012-04-05 08:00,2012-04-18 16:00,2012-04-05 08:00,2012-04-18 16:00,,2012-04-15 08:00,2012-04-28 16:00,,PT_Normal,,,,,ylFvQUprR5G/VOrIC3dCMw,lNDsS8LdSh+FFX08rV+eHg,,,N,0,0,,,2011-11-20 13:37,2011-11-20 13:37,admin,admin
91,85260,1180,11251,841,1,0,N,N,N,CP_Drtn,TT_Task,DT_FixedDUR2,RV_OK,TK_NotStart,JP-A280,Dismantle the old existed doors,,88,72,40,0,0,0,40,0,0,0,,,,2012-05-03 08:00,2012-05-08 16:00,,2012-04-21 08:00,2012-04-25 16:00,2012-04-21 08:00,2012-04-25 16:00,2012-04-21 08:00,2012-04-25 16:00,,2012-05-03 08:00,2012-05-08 16:00,,PT_Normal,,,,,sCgakuANSY6aVb9K2m59oA,zoPTVNvBY0upM28k5bosHw,,,N,0,0,,,2011-11-20 13:37,2011-11-20 13:37,admin,admin
92,85261,1180,11251,841,1,0,N,N,N,CP_Drtn,TT_Task,DT_FixedDUR2,RV_OK,TK_NotStart,JP-A110,Dismantle Steel Handrail,,16,0,16,0,0,0,16,0,0,0,,,,2011-11-28 08:00,2011-11-29 16:00,,2011-11-24 08:00,2011-11-26 16:00,2011-11-24 08:00,2011-11-26 16:00,2011-11-24 08:00,2011-11-26 16:00,,2011-11-28 08:00,2011-11-29 16:00,,PT_Normal,,,,,aBKIY6i9Q1ugGnb1+7MDnQ,EKcz1FZ71Ey6WuKjGHAVCQ,,,N,0,0,,,2011-11-20 13:37,2011-11-20 13:37,admin,admin
93,85262,1180,11251,841,1,0,N,N,N,CP_Drtn,TT_Task,DT_FixedDUR2,RV_OK,TK_NotStart,JP-A120,Sandwich Panel for roofs & walls,,16,0,120,0,0,0,120,0,0,0,,,,2012-03-22 08:00,2012-04-08 16:00,,2012-03-20 08:00,2012-04-05 16:00,2012-03-20 08:00,2012-04-05 16:00,2012-03-20 08:00,2012-04-05 16:00,,2012-03-22 08:00,2012-04-08 16:00,,PT_Normal,,,,,3FZQV3vtQEinRrJqDilrsA,,,,N,0,0,,,2011-11-20 13:37,2011-11-20 13:37,admin,admin
94,85263,1180,11251,841,1,0,N,N,N,CP_Drtn,TT_Task,DT_FixedDUR2,RV_OK,TK_NotStart,JP-A290,Polyurethane Flooring,,48,32,56,0,0,0,56,0,0,0,,,,2012-04-29 08:00,2012-05-06 16:00,,2012-04-22 08:00,2012-04-29 16:00,2012-04-22 08:00,2012-04-29 16:00,2012-04-22 08:00,2012-04-29 16:00,,2012-04-29 08:00,2012-05-06 16:00,,PT_Normal,,,,,Uqi8Ia27QaOIWY690TRSyg,,,,N,0,0,,,2011-11-20 13:37,2011-11-20 13:37,admin,admin
95,85264,1180,11251,841,1,0,N,N,N,CP_Drtn,TT_Rsrc,DT_FixedDUR2,RV_OK,TK_NotStart,JP-A250,Doors erection,,80,0,80,0,0,0,80,0,0,0,,,,2012-04-17 08:00,2012-04-28 16:00,,2012-04-05 08:00,2012-04-16 16:00,2012-04-05 08:00,2012-04-16 16:00,2012-04-05 08:00,2012-04-16 16:00,,2012-04-17 08:00,2012-04-28 16:00,,PT_Normal,,,,,6xNAb16MSGuYV52KrWNbnA,,,,N,0,0,,,2011-11-20 13:37,2011-11-20 13:37,admin,admin
96,85265,1180,11251,841,1,0,N,N,N,CP_Drtn,TT_Task,DT_FixedDUR2,RV_OK,TK_NotStart,JP-A210,Sheet Waterproofing,,104,0,40,0,0,0,40,0,0,0,,,,2012-04-28 08:00,2012-05-02 16:00,,2012-04-12 08:00,2012-04-17 16:00,2012-04-12 08:00,2012-04-17 16:00,2012-04-12 08:00,2012-04-17 16:00,,2012-04-28 08:00,2012-05-02 16:00,,PT_Normal,,,,,fTjkz6W2RHi+eDVF/UB9WQ,,,,N,0,0,,,2011-11-20 13:37,2011-11-20 13:37,admin,admin
97,85266,1180,11251,841,1,0,N,N,N,CP_Drtn,TT_Task,DT_FixedDUR2,RV_OK,TK_NotStart,JP-A220,Thermal Insulation,,104,0,40,0,0,0,40,0,0,0,,,,2012-05-03 08:00,2012-05-08 16:00,,2012-04-18 08:00,2012-04-23 16:00,2012-04-18 08:00,2012-04-23 16:00,2012-04-18 08:00,2012-04-23 16:00,,2012-05-03 08:00,2012-05-08 16:00,,PT_Normal,,,,,kmGAj5RISoe0LYOCux94lQ,,,,N,0,0,,,2011-11-20 13:37,2011-11-20 13:37,admin,admin
98,85267,1180,11251,841,1,0,N,N,N,CP_Drtn,TT_Task,DT_FixedDUR2,RV_OK,TK_NotStart,JP-A230,Roof Finish& rigid insulation 20mm thick,,104,88,40,0,0,0,40,0,0,0,,,,2012-05-03 08:00,2012-05-08 16:00,,2012-04-18 08:00,2012-04-23 16:00,2012-04-18 08:00,2012-04-23 16:00,2012-04-18 08:00,2012-04-23 16:00,,2012-05-03 08:00,2012-05-08 16:00,,PT_Normal,,,,,ucfHnBceTaWYiGxFdkb9Yg,,,,N,0,0,,,2011-11-20 13:37,2011-11-20 13:37,admin,admin
99,85268,1180,11251,841,1,0,N,N,N,CP_Drtn,TT_Task,DT_FixedDUR2,RV_OK,TK_NotStart,JP-A180,External Cement Plaster,,16,0,72,0,0,0,72,0,0,0,,,,2012-04-09 08:00,2012-04-18 16:00,,2012-04-07 08:00,2012-04-16 16:00,2012-04-07 08:00,2012-04-16 16:00,2012-04-07 08:00,2012-04-16 16:00,,2012-04-09 08:00,2012-04-18 16:00,,PT_Normal,,,,,8AeIpp3ZS7WPIfizybYzTQ,,,,N,0,0,,,2011-11-20 13:37,2011-11-20 13:37,admin,admin
100,85269,1180,11251,841,1,0,N,N,N,CP_Drtn,TT_Task,DT_FixedDUR2,RV_OK,TK_NotStart,JP-A240,Epoxy Paint,2106,16,0,80,0,4,4,80,0,0,0,,,,2012-04-19 08:00,2012-04-30 16:00,,2012-04-17 08:00,2012-04-28 16:00,2012-04-17 08:00,2012-04-28 16:00,2012-04-17 08:00,2012-04-28 16:00,,2012-04-19 08:00,2012-04-30 16:00,,PT_Normal,,,,,oTZwOszoQaKUuxgHz4Kilg,,,,N,0,0,,,2011-11-20 13:37,2011-11-20 13:37,admin,admin
101,85270,1180,11251,841,1,0,N,N,N,CP_Drtn,TT_Task,DT_FixedDUR2,RV_OK,TK_NotStart,JP-A190,Sandwich Panel for walls,,88,0,80,0,0,0,80,0,0,0,,,,2012-04-22 08:00,2012-05-02 16:00,,2012-04-09 08:00,2012-04-19 16:00,2012-04-09 08:00,2012-04-19 16:00,2012-04-09 08:00,2012-04-19 16:00,,2012-04-22 08:00,2012-05-02 16:00,,PT_Normal,,,,,dFQf5qcwT5+WikkpkbzElg,lwsFW5iuok+tQAtYTQu6qA,,,N,0,0,,,2011-11-20 13:37,2011-11-20 13:37,admin,admin
102,85271,1180,11251,841,1,0,N,N,N,CP_Drtn,TT_Task,DT_FixedDUR2,RV_OK,TK_NotStart,JP-A310,Acrylic paint,2105,48,32,40,0,2,2,40,0,0,0,,,,2012-04-25 08:00,2012-04-30 16:00,,2012-04-18 08:00,2012-04-23 16:00,2012-04-18 08:00,2012-04-23 16:00,2012-04-18 08:00,2012-04-23 16:00,,2012-04-25 08:00,2012-04-30 16:00,,PT_Normal,,,,,NBKEPb7lRnydEEn7ZZkacw,,,,N,0,0,,,2011-11-20 13:37,2011-11-20 13:37,admin,admin
103,85272,1180,11251,841,1,0,N,N,N,CP_Drtn,TT_Task,DT_FixedDUR2,RV_OK,TK_NotStart,JP-A130,Install corrugated sheets on roof level,,88,0,80,0,0,0,80,0,0,0,,,,2012-04-02 08:00,2012-04-12 16:00,,2012-03-20 08:00,2012-03-31 16:00,2012-03-20 08:00,2012-03-31 16:00,2012-03-20 08:00,2012-03-31 16:00,,2012-04-02 08:00,2012-04-12 16:00,,PT_Normal,,,,,c9CRoScVTGa9TFd8vcX+Rw,,,,N,0,0,,,2011-11-20 13:37,2011-11-20 13:37,admin,admin
104,85273,1180,11251,841,1,0,N,N,N,CP_Drtn,TT_Task,DT_FixedDUR2,RV_OK,TK_NotStart,JP-A140,Install corrugated sheets on mezzanine level,,104,0,80,0,0,0,80,0,0,0,,,,2012-04-04 08:00,2012-04-15 16:00,,2012-03-20 08:00,2012-03-31 16:00,2012-03-20 08:00,2012-03-31 16:00,2012-03-20 08:00,2012-03-31 16:00,,2012-04-04 08:00,2012-04-15 16:00,,PT_Normal,,,,,X57pp9sKRou9pB8zSzhR+g,SN7ca/7Df0KI5w3hVwMolQ,,,N,0,0,,,2011-11-20 13:37,2011-11-20 13:37,admin,admin
105,85274,1180,11251,841,1,0,N,N,N,CP_Drtn,TT_Task,DT_FixedDUR2,RV_OK,TK_NotStart,JP-A200,Slopped plain concrete,,104,0,40,0,0,0,40,0,0,0,,,,2012-04-22 08:00,2012-04-26 16:00,,2012-04-07 08:00,2012-04-11 16:00,2012-04-07 08:00,2012-04-11 16:00,2012-04-07 08:00,2012-04-11 16:00,,2012-04-22 08:00,2012-04-26 16:00,,PT_Normal,,,,,H2l2Qs4FQGaVNObwt1B9FQ,,,,N,0,0,,,2011-11-20 13:37,2011-11-20 13:37,admin,admin
106,85275,1180,11251,841,1,0,N,N,N,CP_Drtn,TT_Task,DT_FixedDUR2,RV_OK,TK_NotStart,JP-A300,Final touch up,,16,0,32,0,0,0,32,0,0,0,,,,2012-05-01 08:00,2012-05-05 16:00,,2012-04-29 08:00,2012-05-02 16:00,2012-04-29 08:00,2012-05-02 16:00,2012-04-29 08:00,2012-05-02 16:00,,2012-05-01 08:00,2012-05-05 16:00,,PT_Normal,,,,,S1srdJEuQF+eDykqfRt86A,,,,N,0,0,,,2011-11-20 13:37,2011-11-20 13:37,admin,admin
107,85276,1180,11251,841,1,0,N,N,N,CP_Drtn,TT_Task,DT_FixedDUR2,RV_OK,TK_NotStart,JP-A320,Handing over & comissioning,,16,0,24,0,0,0,24,0,0,0,,,,2012-05-06 08:00,2012-05-08 16:00,,2012-05-03 08:00,2012-05-06 16:00,2012-05-03 08:00,2012-05-06 16:00,2012-05-03 08:00,2012-05-06 16:00,,2012-05-06 08:00,2012-05-08 16:00,,PT_Normal,,,,,UcUka0iWSK2zSIHNAXTR2g,,,,N,0,0,,,2011-11-20 13:37,2011-11-20 13:37,admin,admin
108,85277,1180,11251,841,1,0,N,N,N,CP_Drtn,TT_Task,DT_FixedDUR2,RV_OK,TK_NotStart,JP-A260,Louvers erection for upper roof,,128,112,104,0,0,0,104,0,0,0,,,,2012-04-24 08:00,2012-05-08 16:00,,2012-04-05 08:00,2012-04-19 16:00,2012-04-05 08:00,2012-04-19 16:00,2012-04-05 08:00,2012-04-19 16:00,,2012-04-24 08:00,2012-05-08 16:00,,PT_Normal,,,,,HklOHXyCRZ2jHfRHBEQdYQ,,,,N,0,0,,,2011-11-20 13:37,2011-11-20 13:37,admin,admin
109,85278,1180,11251,841,1,0,N,N,N,CP_Drtn,TT_Task,DT_FixedDUR2,RV_OK,TK_NotStart,JP-A100,Utilities diversion(Electrical),,16,0,80,0,0,0,80,0,0,0,,,,2011-11-26 08:00,2011-12-07 16:00,,2011-11-23 08:00,2011-12-05 16:00,2011-11-23 08:00,2011-12-05 16:00,2011-11-23 08:00,2011-12-05 16:00,,2011-11-26 08:00,2011-12-07 16:00,,PT_Normal,,,,,1jBbBee7Sm6ejE9Zc3nVRg,,,,N,0,0,,,2011-11-20 13:37,2011-11-20 13:37,admin,admin
110,85279,1180,11251,841,1,0,N,N,N,CP_Drtn,TT_Task,DT_FixedDUR2,RV_OK,TK_NotStart,JP-A150,Steel structure paintings,,104,88,240,0,0,0,240,0,0,0,,,,2012-04-04 08:00,2012-05-08 16:00,,2012-03-20 08:00,2012-04-23 16:00,2012-03-20 08:00,2012-04-23 16:00,2012-03-20 08:00,2012-04-23 16:00,,2012-04-04 08:00,2012-05-08 16:00,,PT_Normal,,,,,8b/jUekRTuqlqx6ArBKDOw,,,,N,0,0,,,2011-11-20 13:37,2011-11-20 13:37,admin,admin
111,85280,1180,11251,841,1,0,N,N,N,CP_Drtn,TT_Task,DT_FixedDUR2,RV_OK,TK_NotStart,JP-A270,Dismantle Sandwich Panel(after construction),,128,104,104,0,0,0,104,0,0,0,,,,2012-04-24 08:00,2012-05-08 16:00,,2012-04-05 08:00,2012-04-19 16:00,2012-04-05 08:00,2012-04-19 16:00,2012-04-05 08:00,2012-04-19 16:00,,2012-04-24 08:00,2012-05-08 16:00,,PT_Normal,,,,,IEkcD5I5SLy0JmM9okayng,,,,N,0,0,,,2011-11-20 13:37,2011-11-20 13:37,admin,admin
112,85281,1180,11251,841,1,0,N,N,N,CP_Drtn,TT_Task,DT_FixedDUR2,RV_OK,TK_NotStart,JP-A330,Steel ladder &steel hand rail erection,,48,0,112,0,0,0,112,0,0,0,,,,2012-04-12 08:00,2012-04-28 16:00,,2012-04-05 08:00,2012-04-21 16:00,2012-04-05 08:00,2012-04-21 16:00,2012-04-05 08:00,2012-04-21 16:00,,2012-04-12 08:00,2012-04-28 16:00,,PT_Normal,,,,,cYHuRGIDSU61X6ETvuqsOA,,,,N,0,0,,,2011-11-20 13:37,2011-11-20 13:37,admin,admin
113,85282,1180,11251,841,1,0,N,N,N,CP_Drtn,TT_Task,DT_FixedDUR2,RV_OK,TK_NotStart,JP-A340,Guard bollard erection,,192,176,56,0,0,0,56,0,0,0,,,,2012-04-23 08:00,2012-04-30 16:00,,2012-03-26 08:00,2012-04-02 16:00,2012-03-26 08:00,2012-04-02 16:00,2012-03-26 08:00,2012-04-02 16:00,,2012-04-23 08:00,2012-04-30 16:00,,PT_Normal,,,,,ct8ap1rwSfm7M6JM2YesPw,,,,N,0,0,,,2011-11-20 13:37,2011-11-20 13:37,admin,admin
114,85283,1180,11254,841,1,0,N,N,N,CP_Drtn,TT_Task,DT_FixedDUR2,RV_OK,TK_NotStart,PET-Z1-CC-100,Demolishing and/or chamfering the existed Concrete parts,,0,0,24,0,0,0,24,0,0,0,,,,2011-11-23 08:00,2011-11-26 16:00,,2011-11-23 08:00,2011-11-26 16:00,2011-11-23 08:00,2011-11-26 16:00,2011-11-23 08:00,2011-11-26 16:00,,2011-11-23 08:00,2011-11-26 16:00,,PT_Normal,,,,,Za5Rw48xTPG0EDgqK4L1bg,UV4BZT/8oUKigbxFWA0WJg,,,Y,0,0,,,2011-11-20 13:37,2011-11-20 13:37,admin,admin
115,85284,1180,11254,841,1,0,N,N,N,CP_Drtn,TT_Task,DT_FixedDUR2,RV_OK,TK_NotStart,PET-Z1-CC-110,Excavation,,0,0,96,0,0,0,96,0,0,0,,,,2011-11-28 08:00,2011-12-11 16:00,,2011-11-28 08:00,2011-12-11 16:00,2011-11-28 08:00,2011-12-11 16:00,2011-11-28 08:00,2011-12-11 16:00,,2011-11-28 08:00,2011-12-11 16:00,,PT_Normal,,,,,a4WgBN85QcK8agCVtTtFFw,MSaLJRU8cUm3CbmnxibhzQ,,,Y,0,0,,,2011-11-20 13:37,2011-11-20 13:37,admin,admin
116,85285,1180,11254,841,1,0,N,N,N,CP_Drtn,TT_Task,DT_FixedDUR2,RV_OK,TK_NotStart,PET-Z1-CC-130,Replacement Under Footings,,0,0,96,0,0,0,96,0,0,0,,,,2011-12-12 08:00,2011-12-25 16:00,,2011-12-12 08:00,2011-12-25 16:00,2011-12-12 08:00,2011-12-25 16:00,2011-12-12 08:00,2011-12-25 16:00,,2011-12-12 08:00,2011-12-25 16:00,,PT_Normal,,,,,jOWEQOZiTrmd4mQQLepjKA,9bHVXVTL/0aPQF6hdJUm1w,,,Y,0,0,,,2011-11-20 13:37,2011-11-20 13:37,admin,admin
117,85286,1180,11254,841,1,0,N,N,N,CP_Drtn,TT_Task,DT_FixedDUR2,RV_OK,TK_NotStart,PET-Z1-CC-150,Plain Concrete footings,2104,0,0,120,0,12,12,120,0,0,0,,,,2011-12-26 08:00,2012-01-11 16:00,,2011-12-26 08:00,2012-01-11 16:00,2011-12-26 08:00,2012-01-11 16:00,2011-12-26 08:00,2012-01-11 16:00,,2011-12-26 08:00,2012-01-11 16:00,,PT_Normal,,,,,6qickaFsTrqPqCpMcS++NQ,Cjqm7hEM30Smwsm9TIWThg,,,Y,0,0,,,2011-11-20 13:37,2011-11-20 13:37,admin,admin
118,85287,1180,11254,841,1,0,N,N,N,CP_Drtn,TT_Task,DT_FixedDUR2,RV_OK,TK_NotStart,PET-Z1-CC-160,R.C. footings & tie beams & planting tie beams,2103,0,0,120,0,185,185,120,0,0,0,,,,2012-01-03 08:00,2012-01-19 16:00,,2012-01-03 08:00,2012-01-19 16:00,2012-01-03 08:00,2012-01-19 16:00,2012-01-03 08:00,2012-01-19 16:00,,2012-01-03 08:00,2012-01-19 16:00,,PT_Normal,,,,,EAFR4VPrTQG3VvoBFFW5iQ,YfOhGsLwDUi+LZKW20xkzg,,,Y,0,0,,,2011-11-20 13:37,2011-11-20 13:37,admin,admin
119,85288,1180,11254,841,1,0,N,N,N,CP_Drtn,TT_Task,DT_FixedDUR2,RV_OK,TK_NotStart,PET-Z1-CC-170,Bituminous waterproofing for foundations,,0,0,96,0,0,0,96,0,0,0,,,,2012-01-11 08:00,2012-01-24 16:00,,2012-01-11 08:00,2012-01-24 16:00,2012-01-11 08:00,2012-01-24 16:00,2012-01-11 08:00,2012-01-24 16:00,,2012-01-11 08:00,2012-01-24 16:00,,PT_Normal,,,,,FxbzvYM0Suq5BfhKL96kYw,Am45y1gIDEK9yVLNYScl0g,,,Y,0,0,,,2011-11-20 13:37,2011-11-20 13:37,admin,admin
120,85289,1180,11254,841,1,0,N,N,N,CP_Drtn,TT_Task,DT_FixedDUR2,RV_OK,TK_NotStart,PET-Z1-CC-220,Steel structure erection(columns & rafters),2118,32,0,160,0,100,100,160,0,0,0,,,,2012-02-06 08:00,2012-02-28 16:00,,2012-02-01 08:00,2012-02-23 16:00,2012-02-01 08:00,2012-02-23 16:00,2012-02-01 08:00,2012-02-23 16:00,,2012-02-06 08:00,2012-02-28 16:00,,PT_Normal,,,,,IXeaoMyZQ1GQiEZp1LOu/g,3O7cWzgq+UGId5uhN7jfWg,,,N,0,0,,,2011-11-20 13:37,2011-11-20 13:37,admin,admin
121,85290,1180,11254,841,1,0,N,N,N,CP_Drtn,TT_Task,DT_FixedDUR2,RV_OK,TK_NotStart,PET-Z1-CC-200,Backfilling under plain concrete,,0,0,104,0,0,0,104,0,0,0,,,,2012-01-25 08:00,2012-02-08 16:00,,2012-01-25 08:00,2012-02-08 16:00,2012-01-25 08:00,2012-02-08 16:00,2012-01-25 08:00,2012-02-08 16:00,,2012-01-25 08:00,2012-02-08 16:00,,PT_Normal,,,,,MWKdWOycS3CySem9+DsBLA,j2Im4DSD+0+IRkZhnijEpQ,,,Y,0,0,,,2011-11-20 13:37,2011-11-20 13:37,admin,admin
122,85291,1180,11254,841,1,0,N,N,N,CP_Drtn,TT_Task,DT_FixedDUR2,RV_OK,TK_NotStart,PET-Z1-CC-260,Slab On Grade,,0,0,120,0,0,0,120,0,0,0,,,,2012-03-10 08:00,2012-03-26 16:00,,2012-03-10 08:00,2012-03-26 16:00,2012-03-10 08:00,2012-03-26 16:00,2012-03-10 08:00,2012-03-26 16:00,,2012-03-10 08:00,2012-03-26 16:00,,PT_Normal,,,,,Qj0DnA2sSzevJX4qZYxknA,mpZVAqlBzEKYmf8fsHMpeg,,,Y,0,0,,,2011-11-20 13:37,2011-11-20 13:37,admin,admin
123,85292,1180,11254,841,1,0,N,N,N,CP_Drtn,TT_Task,DT_FixedDUR2,RV_OK,TK_NotStart,PET-Z1-CC-300,Concrete Screed,,0,0,112,0,0,0,112,0,0,0,,,,2012-03-27 08:00,2012-04-11 16:00,,2012-03-27 08:00,2012-04-11 16:00,2012-03-27 08:00,2012-04-11 16:00,2012-03-27 08:00,2012-04-11 16:00,,2012-03-27 08:00,2012-04-11 16:00,,PT_Normal,,,,,BTQQtF2tTR2CPXbQmrcZJA,cIu6GkUhzEiqmLEM0ORnbA,,,Y,0,0,,,2011-11-20 13:37,2011-11-20 13:37,admin,admin
124,85293,1180,11254,841,1,0,N,N,N,CP_Drtn,TT_Task,DT_FixedDUR2,RV_OK,TK_NotStart,PET-Z1-CC-180,RC for pedestals,,32,0,80,0,0,0,80,0,0,0,,,,2012-01-25 08:00,2012-02-05 16:00,,2012-01-21 08:00,2012-01-31 16:00,2012-01-21 08:00,2012-01-31 16:00,2012-01-21 08:00,2012-01-31 16:00,,2012-01-25 08:00,2012-02-05 16:00,,PT_Normal,,,,,CHmf2jQgSHCaBsr9sfjjUg,1zrznmK5F0mqUCTTiGyGtQ,,,N,0,0,,,2011-11-20 13:37,2011-11-20 13:37,admin,admin
125,85294,1180,11254,841,1,0,N,N,N,CP_Drtn,TT_Task,DT_FixedDUR2,RV_OK,TK_NotStart,PET-Z1-CC-230,Plain concrete 50mm thick,,0,0,80,0,0,0,80,0,0,0,,,,2012-02-27 08:00,2012-03-08 16:00,,2012-02-27 08:00,2012-03-08 16:00,2012-02-27 08:00,2012-03-08 16:00,2012-02-27 08:00,2012-03-08 16:00,,2012-02-27 08:00,2012-03-08 16:00,,PT_Normal,,,,,3fjTNXBCSFy2LM3rTLAM7w,JC6SVhJaikeuTpMNyU+y8g,,,Y,0,0,,,2011-11-20 13:37,2011-11-20 13:37,admin,admin
126,85295,1180,11254,842,1,0,N,N,N,CP_Drtn,TT_Task,DT_FixedDUR2,RV_OK,TK_NotStart,PET-Z1-CC-280,walk on ceiling installation ( @level 15) area-1,,24,24,296,0,0,0,296,0,0,0,,,,2012-03-26 16:00,2012-05-08 16:00,,2012-03-22 16:00,2012-05-05 16:00,2012-03-22 16:00,2012-05-05 16:00,2012-03-22 16:00,2012-05-05 16:00,,2012-03-26 16:00,2012-05-08 16:00,,PT_Normal,,,,,kauK67sOT9GXZxZd+Kz53Q,,,,N,0,0,,,2011-11-20 13:37,2011-11-20 13:37,admin,admin
127,85296,1180,11254,841,1,0,N,N,N,CP_Drtn,TT_Task,DT_FixedDUR2,RV_OK,TK_NotStart,PET-Z1-CC-310,corrugated sheet (@level 17) area-1,,104,0,80,0,0,0,80,0,0,0,,,,2012-04-09 08:00,2012-04-19 16:00,,2012-03-25 08:00,2012-04-04 16:00,2012-03-25 08:00,2012-04-04 16:00,2012-03-25 08:00,2012-04-04 16:00,,2012-04-09 08:00,2012-04-19 16:00,,PT_Normal,,,,,d8bbJ52SSTeIuHVZ0LyZYQ,,,,N,0,0,,,2011-11-20 13:37,2011-11-20 13:37,admin,admin
128,85297,1180,11254,841,1,0,N,N,N,CP_Drtn,TT_Task,DT_FixedDUR2,RV_OK,TK_NotStart,PET-Z1-CC-320,RC casting for deck floor (area-1),,104,0,56,0,0,0,56,0,0,0,,,,2012-04-21 08:00,2012-04-28 16:00,,2012-04-05 08:00,2012-04-12 16:00,2012-04-05 08:00,2012-04-12 16:00,2012-04-05 08:00,2012-04-12 16:00,,2012-04-21 08:00,2012-04-28 16:00,,PT_Normal,,,,,xcxl9Su+RUGdsqiWPVdbqg,,,,N,0,0,,,2011-11-20 13:37,2011-11-20 13:37,admin,admin
129,85298,1180,11254,841,1,0,N,N,N,CP_Drtn,TT_Task,DT_FixedDUR2,RV_OK,TK_NotStart,PET-Z1-CC-250,corrugated sheet (@level 16) area-2,,136,0,120,0,0,0,120,0,0,0,,,,2012-04-02 08:00,2012-04-18 16:00,,2012-03-13 08:00,2012-03-29 16:00,2012-03-13 08:00,2012-03-29 16:00,2012-03-13 08:00,2012-03-29 16:00,,2012-04-02 08:00,2012-04-18 16:00,,PT_Normal,,,,,UsQdY6Y9SSqlfT0HJigmxQ,,,,N,0,0,,,2011-11-20 13:37,2011-11-20 13:37,admin,admin
130,85299,1180,11254,841,1,0,N,N,N,CP_Drtn,TT_Task,DT_FixedDUR2,RV_OK,TK_NotStart,PET-Z1-CC-350,Steel structure erection(bracings & tie rods),2118,144,0,120,0,30,30,120,0,0,0,,,,2012-03-22 08:00,2012-04-08 16:00,,2012-03-01 08:00,2012-03-18 16:00,2012-03-01 08:00,2012-03-18 16:00,2012-03-01 08:00,2012-03-18 16:00,,2012-03-22 08:00,2012-04-08 16:00,,PT_Normal,,,,,S3u9ecqPR0uUtMBUZNMpAQ,,,,N,0,0,,,2011-11-20 13:37,2011-11-20 13:37,admin,admin
131,85300,1180,11254,841,1,0,N,N,N,CP_Drtn,TT_Task,DT_FixedDUR2,RV_OK,TK_NotStart,PET-Z1-CC-360,Galvanized steel gutters,,144,0,112,0,0,0,112,0,0,0,,,,2012-04-09 08:00,2012-04-24 16:00,,2012-03-19 08:00,2012-04-03 16:00,2012-03-19 08:00,2012-04-03 16:00,2012-03-19 08:00,2012-04-03 16:00,,2012-04-09 08:00,2012-04-24 16:00,,PT_Normal,,,,,AMVBbd+1Rs+RQZmT9ufarw,,,,N,0,0,,,2011-11-20 13:37,2011-11-20 13:37,admin,admin
132,85301,1180,11254,841,1,0,N,N,N,CP_Drtn,TT_Task,DT_FixedDUR2,RV_OK,TK_NotStart,PET-Z1-CC-270,RC casting for deck floors (area-2),,136,0,56,0,0,0,56,0,0,0,,,,2012-04-19 08:00,2012-04-26 16:00,,2012-03-31 08:00,2012-04-07 16:00,2012-03-31 08:00,2012-04-07 16:00,2012-03-31 08:00,2012-04-07 16:00,,2012-04-19 08:00,2012-04-26 16:00,,PT_Normal,,,,,cL5GzWHtQhKgxMdVry2ClA,,,,N,0,0,,,2011-11-20 13:37,2011-11-20 13:37,admin,admin
133,85302,1180,11254,842,1,0,N,N,N,CP_Drtn,TT_Task,DT_FixedDUR2,RV_OK,TK_NotStart,PET-Z1-CC-290,walk on ceiling installation ( @level 17.2) area-2,,24,24,296,0,0,0,296,0,0,0,,,,2012-03-26 16:00,2012-05-08 16:00,,2012-03-22 16:00,2012-05-05 16:00,2012-03-22 16:00,2012-05-05 16:00,2012-03-22 16:00,2012-05-05 16:00,,2012-03-26 16:00,2012-05-08 16:00,,PT_Normal,,,,,Jwx+650hSSOsOx3SemrORg,W/8j0RH9FEys56Y7z3MyVg,,,N,0,0,,,2011-11-20 13:37,2011-11-20 13:37,admin,admin
134,85303,1180,11254,841,1,0,N,N,N,CP_Drtn,TT_Task,DT_FixedDUR2,RV_OK,TK_NotStart,PET-Z1-CC-190,Anchors for steel structure,,32,0,80,0,0,0,80,0,0,0,,,,2012-01-25 08:00,2012-02-05 16:00,,2012-01-21 08:00,2012-01-31 16:00,2012-01-21 08:00,2012-01-31 16:00,2012-01-21 08:00,2012-01-31 16:00,,2012-01-25 08:00,2012-02-05 16:00,,PT_Normal,,,,,6VesK+u4Sh6ILD7zbexIAQ,,,,N,0,0,,,2011-11-20 13:37,2011-11-20 13:37,admin,admin
135,85304,1180,11254,841,1,0,N,N,N,CP_Drtn,TT_Task,DT_FixedDUR2,RV_OK,TK_NotStart,PET-Z1-CC-370,Columns & rafters (@level 21.85&22.75),,72,0,40,0,0,0,40,0,0,0,,,,2012-03-18 08:00,2012-03-22 16:00,,2012-03-07 08:00,2012-03-12 16:00,2012-03-07 08:00,2012-03-12 16:00,2012-03-07 08:00,2012-03-12 16:00,,2012-03-18 08:00,2012-03-22 16:00,,PT_Normal,,,,,qAgZ1dvURsan64AKstCkMg,,,,N,0,0,,,2011-11-20 13:37,2011-11-20 13:37,admin,admin
136,85305,1180,11254,841,1,0,N,N,N,CP_Drtn,TT_Task,DT_FixedDUR2,RV_OK,TK_NotStart,PET-Z1-CC-240,Membrane sheet 400 micron,,0,0,80,0,0,0,80,0,0,0,,,,2012-02-27 08:00,2012-03-08 16:00,,2012-02-27 08:00,2012-03-08 16:00,2012-02-27 08:00,2012-03-08 16:00,2012-02-27 08:00,2012-03-08 16:00,,2012-02-27 08:00,2012-03-08 16:00,,PT_Normal,,,,,V5BrwHvmTmmkJ9K8TAf2bw,,,,Y,0,0,,,2011-11-20 13:37,2011-11-20 13:37,admin,admin
137,85306,1180,11254,841,1,0,N,N,N,CP_Drtn,TT_Task,DT_FixedDUR2,RV_OK,TK_NotStart,PET-Z1-CC-120,Detect underground Utilities,,16,0,96,0,0,0,96,0,0,0,,,,2011-11-30 08:00,2011-12-13 16:00,,2011-11-28 08:00,2011-12-11 16:00,2011-11-28 08:00,2011-12-11 16:00,2011-11-28 08:00,2011-12-11 16:00,,2011-11-30 08:00,2011-12-13 16:00,,PT_Normal,,,,,IoYJP/8dSqqR4Cyp/TLqrg,,,,N,0,0,,,2011-11-20 13:37,2011-11-20 13:37,admin,admin
138,85307,1180,11254,841,1,0,N,N,N,CP_Drtn,TT_Task,DT_FixedDUR2,RV_OK,TK_NotStart,PET-Z1-CC-140,Utilities diversion,,16,16,144,0,0,0,144,0,0,0,,,,2011-12-14 08:00,2012-01-03 16:00,,2011-12-12 08:00,2012-01-01 16:00,2011-12-12 08:00,2012-01-01 16:00,2011-12-12 08:00,2012-01-01 16:00,,2011-12-14 08:00,2012-01-03 16:00,,PT_Normal,,,,,mAOdY7XISMahSjsQuAP33w,,,,N,0,0,,,2011-11-20 13:37,2011-11-20 13:37,admin,admin
139,85308,1180,11254,841,1,0,N,N,N,CP_Drtn,TT_Task,DT_FixedDUR2,RV_OK,TK_NotStart,PET-Z1-CC-210,Concrete beams & columns for masonry,,64,0,240,0,0,0,240,0,0,0,,,,2012-02-08 08:00,2012-03-13 16:00,,2012-01-30 08:00,2012-03-04 16:00,2012-01-30 08:00,2012-03-04 16:00,2012-01-30 08:00,2012-03-04 16:00,,2012-02-08 08:00,2012-03-13 16:00,,PT_Normal,,,,,yNYijw7ZTt+T/i1WCV/VMg,,,,N,0,0,,,2011-11-20 13:37,2011-11-20 13:37,admin,admin
140,85309,1180,11254,841,1,0,N,N,N,CP_Drtn,TT_Task,DT_FixedDUR2,RV_OK,TK_NotStart,PET-Z1-CC-330,Expansion joint,,56,48,56,0,0,0,56,0,0,0,,,,2012-04-12 08:00,2012-04-19 16:00,,2012-04-04 08:00,2012-04-11 16:00,2012-04-04 08:00,2012-04-11 16:00,2012-04-04 08:00,2012-04-11 16:00,,2012-04-12 08:00,2012-04-19 16:00,,PT_Normal,,,,,tfsN6XYrQkK65bjWwVU7Hw,,,,N,0,0,,,2011-11-20 13:37,2011-11-20 13:37,admin,admin
141,85310,1180,11254,841,1,0,N,N,N,CP_Drtn,TT_Task,DT_FixedDUR2,RV_OK,TK_NotStart,PET-Z1-CC-340,Stainless steel pane fixation,,56,48,56,0,0,0,56,0,0,0,,,,2012-04-12 08:00,2012-04-19 16:00,,2012-04-04 08:00,2012-04-11 16:00,2012-04-04 08:00,2012-04-11 16:00,2012-04-04 08:00,2012-04-11 16:00,,2012-04-12 08:00,2012-04-19 16:00,,PT_Normal,,,,,llPJZQslSmyfaZzJGC3zNg,,,,N,0,0,,,2011-11-20 13:37,2011-11-20 13:37,admin,admin
142,85311,1180,11254,841,1,0,N,N,N,CP_Drtn,TT_Task,DT_FixedDUR2,RV_OK,TK_NotStart,PET-Z1-CC-225,Steel structure erection(purlins & portal frames),2118,32,0,160,0,70,70,160,0,0,0,,,,2012-02-18 08:00,2012-03-11 16:00,,2012-02-13 08:00,2012-03-06 16:00,2012-02-13 08:00,2012-03-06 16:00,2012-02-13 08:00,2012-03-06 16:00,,2012-02-18 08:00,2012-03-11 16:00,,PT_Normal,,,,,4ArqOregT++fdtDT/BPyhQ,HeE6xW/HQwWE7B51uyI0Dg,,,N,0,0,,,2011-11-20 13:37,2011-11-20 13:37,admin,admin
143,85312,1180,11255,841,1,0,N,N,N,CP_Drtn,TT_Task,DT_FixedDUR2,RV_OK,TK_NotStart,PET-Z1-AR-330,Erection of Roof Sandwich Panel(@level 21.85&22.75),,160,160,56,0,0,0,56,0,0,0,,,,2012-05-01 08:00,2012-05-08 16:00,,2012-04-08 08:00,2012-04-15 16:00,2012-04-08 08:00,2012-04-15 16:00,2012-04-08 08:00,2012-04-15 16:00,,2012-05-01 08:00,2012-05-08 16:00,,PT_Normal,,,,,yk4ebnfVTlCJ2cJdBTjM4g,,,,N,0,0,,,2011-11-20 13:37,2011-11-20 13:37,admin,admin
144,85313,1180,11255,841,1,0,N,N,N,CP_Drtn,TT_Task,DT_FixedDUR2,RV_OK,TK_NotStart,PET-Z1-AR-340,Folded steel sheets in pet corners,,144,144,56,0,0,0,56,0,0,0,,,,2012-05-01 08:00,2012-05-08 16:00,,2012-04-10 08:00,2012-04-17 16:00,2012-04-10 08:00,2012-04-17 16:00,2012-04-10 08:00,2012-04-17 16:00,,2012-05-01 08:00,2012-05-08 16:00,,PT_Normal,,,,,riUgVRNrQuifjemF124WOQ,,,,N,0,0,,,2011-11-20 13:37,2011-11-20 13:37,admin,admin
145,85314,1180,11255,841,1,0,N,N,N,CP_Drtn,TT_Task,DT_FixedDUR2,RV_OK,TK_NotStart,PET-Z1-AR-350,Stainless steel doors erection,,16,16,80,0,0,0,80,0,0,0,,,,2012-04-28 08:00,2012-05-08 16:00,,2012-04-25 08:00,2012-05-06 16:00,2012-04-25 08:00,2012-05-06 16:00,2012-04-25 08:00,2012-05-06 16:00,,2012-04-28 08:00,2012-05-08 16:00,,PT_Normal,,,,,0AVIuWsPSOyyyHLYyqUhOg,,,,N,0,0,,,2011-11-20 13:37,2011-11-20 13:37,admin,admin
146,85315,1180,11255,841,1,0,N,N,N,CP_Drtn,TT_Task,DT_FixedDUR2,RV_OK,TK_NotStart,PET-Z1-AR-300,Roll up shutter doors erection,,16,16,80,0,0,0,80,0,0,0,,,,2012-04-28 08:00,2012-05-08 16:00,,2012-04-25 08:00,2012-05-06 16:00,2012-04-25 08:00,2012-05-06 16:00,2012-04-25 08:00,2012-05-06 16:00,,2012-04-28 08:00,2012-05-08 16:00,,PT_Normal,,,,,+lFZjCVORdOpSKZTVY5Gjw,,,,N,0,0,,,2011-11-20 13:37,2011-11-20 13:37,admin,admin
147,85316,1180,11255,841,1,0,N,N,N,CP_Drtn,TT_Task,DT_FixedDUR2,RV_OK,TK_NotStart,PET-Z1-AR-200,Polyurethane Flooring,,48,48,120,0,0,0,120,0,0,0,,,,2012-04-22 08:00,2012-05-08 16:00,,2012-04-15 08:00,2012-05-01 16:00,2012-04-15 08:00,2012-05-01 16:00,2012-04-15 08:00,2012-05-01 16:00,,2012-04-22 08:00,2012-05-08 16:00,,PT_Normal,,,,,8MxW1r4TRv67TKW1uak29Q,,,,N,0,0,,,2011-11-20 13:37,2011-11-20 13:37,admin,admin
148,85317,1180,11255,841,1,0,N,N,N,CP_Drtn,TT_Task,DT_FixedDUR2,RV_OK,TK_NotStart,PET-Z1-AR-230,Dismantle Works (doors & windows),,16,16,24,0,0,0,24,0,0,0,,,,2012-04-25 08:00,2012-04-28 16:00,,2012-04-23 08:00,2012-04-25 16:00,2012-04-23 08:00,2012-04-25 16:00,2012-04-23 08:00,2012-04-25 16:00,,2012-04-25 08:00,2012-04-28 16:00,,PT_Normal,,,,,wVoNf/V/ROu45JTPkE8zGw,nk6cZ6YC4k2iLZXO4yU53w,,,N,0,0,,,2011-11-20 13:37,2011-11-20 13:37,admin,admin
149,85318,1180,11255,841,1,0,N,N,N,CP_Drtn,TT_Task,DT_FixedDUR2,RV_OK,TK_NotStart,PET-Z1-AR-190,Sandwich Panel For Walls,,8,0,112,0,0,0,112,0,0,0,,,,2012-04-21 08:00,2012-05-06 16:00,,2012-04-19 08:00,2012-05-05 16:00,2012-04-19 08:00,2012-05-05 16:00,2012-04-19 08:00,2012-05-05 16:00,,2012-04-21 08:00,2012-05-06 16:00,,PT_Normal,,,,,OOZ/Dx4RQyS7xePft4Slcw,OffvCNVCsEyr8HyLD8rrpA,,,N,0,0,,,2011-11-20 13:37,2011-11-20 13:37,admin,admin
150,85319,1180,11255,841,1,0,N,N,N,CP_Drtn,TT_Task,DT_FixedDUR2,RV_OK,TK_NotStart,PET-Z1-AR-100,Masonry,2108,64,0,240,0,120,120,240,0,0,0,,,,2012-02-01 08:00,2012-03-06 16:00,,2012-01-23 08:00,2012-02-26 16:00,2012-01-23 08:00,2012-02-26 16:00,2012-01-23 08:00,2012-02-26 16:00,,2012-02-01 08:00,2012-03-06 16:00,,PT_Normal,,,,,k4Z1JCEKT0K1OrwTV29kqA,K9HYqWP7GEiNw2kt8Snsjw,,,N,0,0,,,2011-11-20 13:37,2011-11-20 13:37,admin,admin
151,85320,1180,11255,841,1,0,N,N,N,CP_Drtn,TT_Task,DT_FixedDUR2,RV_OK,TK_NotStart,PET-Z1-AR-110,Internal Cement Plaster,2107,64,64,200,0,120,120,200,0,0,0,,,,2012-03-14 08:00,2012-04-11 16:00,,2012-03-05 08:00,2012-04-02 16:00,2012-03-05 08:00,2012-04-02 16:00,2012-03-05 08:00,2012-04-02 16:00,,2012-03-14 08:00,2012-04-11 16:00,,PT_Normal,,,,,CL0EyINFQ/CHkI6u7L8Whw,SVZaDcDyMkKdh7I9fLW1Ug,,,N,0,0,,,2011-11-20 13:37,2011-11-20 13:37,admin,admin
152,85321,1180,11255,841,1,0,N,N,N,CP_Drtn,TT_Task,DT_FixedDUR2,RV_OK,TK_NotStart,PET-Z1-AR-240,Steel Doors erection,,0,0,80,0,0,0,80,0,0,0,,,,2012-04-25 08:00,2012-05-06 16:00,,2012-04-25 08:00,2012-05-06 16:00,2012-04-25 08:00,2012-05-06 16:00,2012-04-25 08:00,2012-05-06 16:00,,2012-04-25 08:00,2012-05-06 16:00,,PT_Normal,,,,,2IKTygeAQBG1rcmto0Qs1w,VEJ1vuTwWk2+O1LEcDfaxw,,,Y,0,0,,,2011-11-20 13:37,2011-11-20 13:37,admin,admin
153,85322,1180,11255,841,1,0,N,N,N,CP_Drtn,TT_Task,DT_FixedDUR2,RV_OK,TK_NotStart,PET-Z1-AR-170,Epoxy Paint,2106,0,0,80,0,16,16,80,0,0,0,,,,2012-04-12 08:00,2012-04-23 16:00,,2012-04-12 08:00,2012-04-23 16:00,2012-04-12 08:00,2012-04-23 16:00,2012-04-12 08:00,2012-04-23 16:00,,2012-04-12 08:00,2012-04-23 16:00,,PT_Normal,,,,,/XozMZuQQCGCphONC/zoOA,v3RoKZnmLEqpj6ddluFxtw,,,Y,0,0,,,2011-11-20 13:37,2011-11-20 13:37,admin,admin
154,85323,1180,11255,841,1,0,N,N,N,CP_Drtn,TT_Task,DT_FixedDUR2,RV_OK,TK_NotStart,PET-Z1-AR-160,External Cement Plaster,2107,312,256,80,0,20,20,80,0,0,0,,,,2012-04-19 08:00,2012-04-30 16:00,,2012-03-05 08:00,2012-03-15 16:00,2012-03-05 08:00,2012-03-15 16:00,2012-03-05 08:00,2012-03-15 16:00,,2012-04-19 08:00,2012-04-30 16:00,,PT_Normal,,,,,wRXKrRnQQ6CvvN52XzV73w,EU0iKbww5kutwnfneGe6Aw,,,N,0,0,,,2011-11-20 13:37,2011-11-20 13:37,admin,admin
155,85324,1180,11255,841,1,0,N,N,N,CP_Drtn,TT_Task,DT_FixedDUR2,RV_OK,TK_NotStart,PET-Z1-AR-130,Erection of Roof Sandwich Panel(@level 19.5&20.40,,72,0,136,0,0,0,136,0,0,0,,,,2012-03-24 08:00,2012-04-11 16:00,,2012-03-13 08:00,2012-04-01 16:00,2012-03-13 08:00,2012-04-01 16:00,2012-03-13 08:00,2012-04-01 16:00,,2012-03-24 08:00,2012-04-11 16:00,,PT_Normal,,,,,Qk9wDsoiQOKZg7FBTYplVQ,NGko0tNVlkO+GM/b8P5SNA,,,N,0,0,,,2011-11-20 13:37,2011-11-20 13:37,admin,admin
156,85325,1180,11255,841,1,0,N,N,N,CP_Drtn,TT_Task,DT_FixedDUR2,RV_OK,TK_NotStart,PET-Z1-AR-140,Epoxy Paint (@level 15) area-2,2106,136,136,80,0,4,4,80,0,0,0,,,,2012-04-28 08:00,2012-05-08 16:00,,2012-04-08 08:00,2012-04-18 16:00,2012-04-08 08:00,2012-04-18 16:00,2012-04-08 08:00,2012-04-18 16:00,,2012-04-28 08:00,2012-05-08 16:00,,PT_Normal,,,,,sBkmEHuQSzmZImW4VynWMA,,,,N,0,0,,,2011-11-20 13:37,2011-11-20 13:37,admin,admin
157,85326,1180,11255,841,1,0,N,N,N,CP_Drtn,TT_Task,DT_FixedDUR2,RV_OK,TK_NotStart,PET-Z1-AR-220,Acrylic paint for external plaster,2105,56,56,56,0,12,12,56,0,0,0,,,,2012-05-01 08:00,2012-05-08 16:00,,2012-04-23 08:00,2012-04-30 16:00,2012-04-23 08:00,2012-04-30 16:00,2012-04-23 08:00,2012-04-30 16:00,,2012-05-01 08:00,2012-05-08 16:00,,PT_Normal,,,,,teha+FhGTTGOegzZ1Asf5w,,,,N,0,0,,,2011-11-20 13:37,2011-11-20 13:37,admin,admin
158,85327,1180,11255,841,1,0,N,N,N,CP_Drtn,TT_Task,DT_FixedDUR2,RV_OK,TK_NotStart,PET-Z1-AR-180,Epoxy Paint (@level 17.8) area-1,2106,104,104,72,0,20,20,72,0,0,0,,,,2012-04-29 08:00,2012-05-08 16:00,,2012-04-14 08:00,2012-04-23 16:00,2012-04-14 08:00,2012-04-23 16:00,2012-04-14 08:00,2012-04-23 16:00,,2012-04-29 08:00,2012-05-08 16:00,,PT_Normal,,,,,P5DPQvs3RNmz2xFBz6DGbQ,Hdfusjx5TEGeZsTQP+Cw1g,,,N,0,0,,,2011-11-20 13:37,2011-11-20 13:37,admin,admin
159,85328,1180,11255,841,1,0,N,N,N,CP_Drtn,TT_Task,DT_FixedDUR2,RV_OK,TK_NotStart,PET-Z1-AR-310,Corrugated sheet paintings(area1),,120,16,80,0,0,0,80,0,0,0,,,,2012-04-17 08:00,2012-04-28 16:00,,2012-03-31 08:00,2012-04-10 16:00,2012-03-31 08:00,2012-04-10 16:00,2012-03-31 08:00,2012-04-10 16:00,,2012-04-17 08:00,2012-04-28 16:00,,PT_Normal,,,,,YojyVHfBQT6bvL05O0/QRQ,,,,N,0,0,,,2011-11-20 13:37,2011-11-20 13:37,admin,admin
160,85329,1180,11255,841,1,0,N,N,N,CP_Drtn,TT_Task,DT_FixedDUR2,RV_OK,TK_NotStart,PET-Z1-AR-320,Corrugated sheet paintings(area2),,136,0,80,0,0,0,80,0,0,0,,,,2012-04-08 08:00,2012-04-18 16:00,,2012-03-19 08:00,2012-03-29 16:00,2012-03-19 08:00,2012-03-29 16:00,2012-03-19 08:00,2012-03-29 16:00,,2012-04-08 08:00,2012-04-18 16:00,,PT_Normal,,,,,Q4ly1vMoSJ2JHaKS0eP2Uw,,,,N,0,0,,,2011-11-20 13:37,2011-11-20 13:37,admin,admin
161,85330,1180,11255,841,1,0,N,N,N,CP_Drtn,TT_Task,DT_FixedDUR2,RV_OK,TK_NotStart,PET-Z1-AR-150,Fair face conc. guard base(kerb),,8,0,120,0,0,0,120,0,0,0,,,,2012-04-03 08:00,2012-04-19 16:00,,2012-04-02 08:00,2012-04-18 16:00,2012-04-02 08:00,2012-04-18 16:00,2012-04-02 08:00,2012-04-18 16:00,,2012-04-03 08:00,2012-04-19 16:00,,PT_Normal,,,,,qQCmlMsUTg+xdPR+5DPvKA,,,,N,0,0,,,2011-11-20 13:37,2011-11-20 13:37,admin,admin
162,85331,1180,11255,841,1,0,N,N,N,CP_Drtn,TT_Task,DT_FixedDUR2,RV_OK,TK_NotStart,PET-Z1-AR-280,Final touch up,,0,0,24,0,0,0,24,0,0,0,,,,2012-05-03 08:00,2012-05-06 16:00,,2012-05-03 08:00,2012-05-06 16:00,2012-05-03 08:00,2012-05-06 16:00,2012-05-03 08:00,2012-05-06 16:00,,2012-05-03 08:00,2012-05-06 16:00,,PT_Normal,,,,,CF/h44VoRrKxG3uiWaNbew,,,,Y,0,0,,,2011-11-20 13:37,2011-11-20 13:37,admin,admin
163,85332,1180,11255,841,1,0,N,N,N,CP_Drtn,TT_Task,DT_FixedDUR2,RV_OK,TK_NotStart,PET-Z1-AR-290,Handing over & comissioning,,0,0,32,0,0,0,32,0,0,0,,,,2012-05-05 08:00,2012-05-08 16:00,,2012-05-05 08:00,2012-05-08 16:00,2012-05-05 08:00,2012-05-08 16:00,2012-05-05 08:00,2012-05-08 16:00,,2012-05-05 08:00,2012-05-08 16:00,,PT_Normal,,,,,/dE4l8t1RpyWJc6HV7fVKQ,,,,Y,0,0,,,2011-11-20 13:37,2011-11-20 13:37,admin,admin
164,85333,1180,11255,841,1,0,N,N,N,CP_Drtn,TT_Task,DT_FixedDUR2,RV_OK,TK_NotStart,PET-Z1-AR-250,Louvers erection,,24,24,80,0,0,0,80,0,0,0,,,,2012-04-28 08:00,2012-05-08 16:00,,2012-04-24 08:00,2012-05-05 16:00,2012-04-24 08:00,2012-05-05 16:00,2012-04-24 08:00,2012-05-05 16:00,,2012-04-28 08:00,2012-05-08 16:00,,PT_Normal,,,,,tO2va9egQjiMbm/QCusp0Q,JqDJGf9oOEeYVvR5RLbg1g,,,N,0,0,,,2011-11-20 13:37,2011-11-20 13:37,admin,admin
165,85334,1180,11255,841,1,0,N,N,N,CP_Drtn,TT_Task,DT_FixedDUR2,RV_OK,TK_NotStart,PET-Z1-AR-260,Windows erection,,24,24,80,0,0,0,80,0,0,0,,,,2012-04-28 08:00,2012-05-08 16:00,,2012-04-24 08:00,2012-05-05 16:00,2012-04-24 08:00,2012-05-05 16:00,2012-04-24 08:00,2012-05-05 16:00,,2012-04-28 08:00,2012-05-08 16:00,,PT_Normal,,,,,sDT4GQKWQ2Wg2QVsAqutKA,ZKeZk6dzcE6TuFyYuw0aXw,,,N,0,0,,,2011-11-20 13:37,2011-11-20 13:37,admin,admin
166,85335,1180,11255,841,1,0,N,N,N,CP_Drtn,TT_Task,DT_FixedDUR2,RV_OK,TK_NotStart,PET-Z1-AR-270,Erection of Steel ladder & handrail & cheker plates& painting,,232,232,80,0,0,0,80,0,0,0,,,,2012-04-28 08:00,2012-05-08 16:00,,2012-03-25 08:00,2012-04-04 16:00,2012-03-25 08:00,2012-04-04 16:00,2012-03-25 08:00,2012-04-04 16:00,,2012-04-28 08:00,2012-05-08 16:00,,PT_Normal,,,,,fsrIOdo9Q4qoaUhFEG8Ifg,byFoe6Be20ydjmst+mmm7Q,,,N,0,0,,,2011-11-20 13:37,2011-11-20 13:37,admin,admin
167,85336,1180,11255,841,1,0,N,N,N,CP_Drtn,TT_Task,DT_FixedDUR2,RV_OK,TK_NotStart,PET-Z1-AR-120,Steel structure paintings,,152,152,240,0,0,0,240,0,0,0,,,,2012-04-04 08:00,2012-05-08 16:00,,2012-03-13 08:00,2012-04-16 16:00,2012-03-13 08:00,2012-04-16 16:00,2012-03-13 08:00,2012-04-16 16:00,,2012-04-04 08:00,2012-05-08 16:00,,PT_Normal,,,,,lo6Jzg+PQ5G2xq0pQO8LXg,,,,N,0,0,,,2011-11-20 13:37,2011-11-20 13:37,admin,admin
168,85337,1180,11255,841,1,0,N,N,N,CP_Drtn,TT_Task,DT_FixedDUR2,RV_OK,TK_NotStart,PET-Z1-AR-210,Guard bollard erection,,216,216,56,0,0,0,56,0,0,0,,,,2012-04-26 08:00,2012-05-03 16:00,,2012-03-26 08:00,2012-04-02 16:00,2012-03-26 08:00,2012-04-02 16:00,2012-03-26 08:00,2012-04-02 16:00,,2012-04-26 08:00,2012-05-03 16:00,,PT_Normal,,,,,k2co1FK5QRiTmyhP0/6SsA,,,,N,0,0,,,2011-11-20 13:37,2011-11-20 13:37,admin,admin
169,85338,1180,11257,841,1,0,N,N,N,CP_Drtn,TT_Task,DT_FixedDUR2,RV_OK,TK_NotStart,PET-Z2-AR-280,Erection of Roof Sandwich Panel(@level 21.85&22.75),,56,56,56,0,0,0,56,0,0,0,,,,2012-05-01 08:00,2012-05-08 16:00,,2012-04-23 08:00,2012-04-30 16:00,2012-04-23 08:00,2012-04-30 16:00,2012-04-23 08:00,2012-04-30 16:00,,2012-05-01 08:00,2012-05-08 16:00,,PT_Normal,,,,,jsdXHFeQQNmWDfNtyYCFCg,,,,N,0,0,,,2011-11-20 13:37,2011-11-20 13:37,admin,admin
170,85339,1180,11257,841,1,0,N,N,N,CP_Drtn,TT_Task,DT_FixedDUR2,RV_OK,TK_NotStart,PET-Z2-AR-290,Piping for drainage system(between old&new pet building),,72,0,80,0,0,0,80,0,0,0,,,,2012-03-24 08:00,2012-04-03 16:00,,2012-03-13 08:00,2012-03-24 16:00,2012-03-13 08:00,2012-03-24 16:00,2012-03-13 08:00,2012-03-24 16:00,,2012-03-24 08:00,2012-04-03 16:00,,PT_Normal,,,,,DQnjC+1kR/2l0W6VCfXAIg,,,,N,0,0,,,2011-11-20 13:37,2011-11-20 13:37,admin,admin
171,85340,1180,11257,841,1,0,N,N,N,CP_Drtn,TT_Task,DT_FixedDUR2,RV_OK,TK_NotStart,PET-Z2-AR-300,Floor clean-outs,,72,64,40,0,0,0,40,0,0,0,,,,2012-04-04 08:00,2012-04-09 16:00,,2012-03-25 08:00,2012-03-29 16:00,2012-03-25 08:00,2012-03-29 16:00,2012-03-25 08:00,2012-03-29 16:00,,2012-04-04 08:00,2012-04-09 16:00,,PT_Normal,,,,,Ennt8OHATkyDBzxCAtFDWA,,,,N,0,0,,,2011-11-20 13:37,2011-11-20 13:37,admin,admin
172,85341,1180,11257,841,1,0,N,N,N,CP_Drtn,TT_Task,DT_FixedDUR2,RV_OK,TK_NotStart,PET-Z2-AR-310,Stainless steel doors erection,,56,48,80,0,0,0,80,0,0,0,,,,2012-04-25 08:00,2012-05-06 16:00,,2012-04-17 08:00,2012-04-28 16:00,2012-04-17 08:00,2012-04-28 16:00,2012-04-17 08:00,2012-04-28 16:00,,2012-04-25 08:00,2012-05-06 16:00,,PT_Normal,,,,,GKPKOheDRFSKbdrsdtD4cA,,,,N,0,0,,,2011-11-20 13:37,2011-11-20 13:37,admin,admin
173,85342,1180,11257,841,1,0,N,N,N,CP_Drtn,TT_Task,DT_FixedDUR2,RV_OK,TK_NotStart,PET-Z2-AR-320,Roll up shutter doors erection,,8,0,80,0,0,0,80,0,0,0,,,,2012-04-18 08:00,2012-04-29 16:00,,2012-04-17 08:00,2012-04-28 16:00,2012-04-17 08:00,2012-04-28 16:00,2012-04-17 08:00,2012-04-28 16:00,,2012-04-18 08:00,2012-04-29 16:00,,PT_Normal,,,,,dNSz3Dx1R9+R3IYH8tdWHw,,,,N,0,0,,,2011-11-20 13:37,2011-11-20 13:37,admin,admin
174,85343,1180,11257,841,1,0,N,N,N,CP_Drtn,TT_Task,DT_FixedDUR2,RV_OK,TK_NotStart,PET-Z2-AR-330,Galvanized steel flashing&pur foam,,16,24,80,0,0,0,80,0,0,0,,,,2012-04-28 08:00,2012-05-08 16:00,,2012-04-25 08:00,2012-05-06 16:00,2012-04-25 08:00,2012-05-06 16:00,2012-04-25 08:00,2012-05-06 16:00,,2012-04-28 08:00,2012-05-08 16:00,,PT_Normal,,,,,QKbZgUxDSMqMkZC29eG+xA,,,,N,0,0,,,2011-11-20 13:37,2011-11-20 13:37,admin,admin
175,85344,1180,11257,841,1,0,N,N,N,CP_Drtn,TT_Task,DT_FixedDUR2,RV_OK,TK_NotStart,PET-Z2-AR-270,Dismantle sandwich panels& rain gutter,,16,8,24,0,0,0,24,0,0,0,,,,2012-04-30 08:00,2012-05-02 16:00,,2012-04-28 08:00,2012-04-30 16:00,2012-04-28 08:00,2012-04-30 16:00,2012-04-28 08:00,2012-04-30 16:00,,2012-04-30 08:00,2012-05-02 16:00,,PT_Normal,,,,,dJ1B3gmAQUKYk58vlYkv9Q,,,,N,0,0,,,2011-11-20 13:37,2011-11-20 13:37,admin,admin
176,85345,1180,11257,841,1,0,N,N,N,CP_Drtn,TT_Task,DT_FixedDUR2,RV_OK,TK_NotStart,PET-Z2-AR-190,Dismantle Works (doors & windows),,16,0,24,0,0,0,24,0,0,0,,,,2012-04-26 08:00,2012-04-29 16:00,,2012-04-24 08:00,2012-04-26 16:00,2012-04-24 08:00,2012-04-26 16:00,2012-04-24 08:00,2012-04-26 16:00,,2012-04-26 08:00,2012-04-29 16:00,,PT_Normal,,,,,fRvErh9YTUiwP3KIuAfPUQ,Te7T52zcp0++MK3LV1guww,,,N,0,0,,,2011-11-20 13:37,2011-11-20 13:37,admin,admin
177,85346,1180,11257,841,1,0,N,N,N,CP_Drtn,TT_Task,DT_FixedDUR2,RV_OK,TK_NotStart,PET-Z2-AR-150,Sandwich Panel For Walls,,8,0,120,0,0,0,120,0,0,0,,,,2012-04-18 08:00,2012-05-05 16:00,,2012-04-17 08:00,2012-05-03 16:00,2012-04-17 08:00,2012-05-03 16:00,2012-04-17 08:00,2012-05-03 16:00,,2012-04-18 08:00,2012-05-05 16:00,,PT_Normal,,,,,2nfLx+MDSgShOTSUHFWrmg,+3StPaSLHkOtWSUB+w7wYA,,,N,0,0,,,2011-11-20 13:37,2011-11-20 13:37,admin,admin
178,85347,1180,11257,841,1,0,N,N,N,CP_Drtn,TT_Task,DT_FixedDUR2,RV_OK,TK_NotStart,PET-Z2-AR-100,Masonry,2108,24,0,240,0,120,120,240,0,0,0,,,,2012-02-01 08:00,2012-03-06 16:00,,2012-01-29 08:00,2012-03-03 16:00,2012-01-29 08:00,2012-03-03 16:00,2012-01-29 08:00,2012-03-03 16:00,,2012-02-01 08:00,2012-03-06 16:00,,PT_Normal,,,,,FuJ9KVxESxaEkl4fxEQ4sQ,9PhId843hEyLB+qXjiNr5w,,,N,0,0,,,2011-11-20 13:37,2011-11-20 13:37,admin,admin
179,85348,1180,11257,841,1,0,N,N,N,CP_Drtn,TT_Task,DT_FixedDUR2,RV_OK,TK_NotStart,PET-Z2-AR-110,Internal Cement Plaster,2107,24,16,240,0,120,120,240,0,0,0,,,,2012-03-14 08:00,2012-04-17 16:00,,2012-03-11 08:00,2012-04-14 16:00,2012-03-11 08:00,2012-04-14 16:00,2012-03-11 08:00,2012-04-14 16:00,,2012-03-14 08:00,2012-04-17 16:00,,PT_Normal,,,,,3z4Xdr+oRYeVt93dv+uVUA,1BvZ/l2lXU66fAyjOkHTNg,,,N,0,0,,,2011-11-20 13:37,2011-11-20 13:37,admin,admin
180,85349,1180,11257,841,1,0,N,N,N,CP_Drtn,TT_Task,DT_FixedDUR2,RV_OK,TK_NotStart,PET-Z2-AR-200,Steel Doors erection,,8,0,80,0,0,0,80,0,0,0,,,,2012-04-25 08:00,2012-05-06 16:00,,2012-04-24 08:00,2012-05-05 16:00,2012-04-24 08:00,2012-05-05 16:00,2012-04-24 08:00,2012-05-05 16:00,,2012-04-25 08:00,2012-05-06 16:00,,PT_Normal,,,,,kDn0vUGRRsOpYgdY5u7A2w,QYKXBPsHOUajUxp/raVuWw,,,N,0,0,,,2011-11-20 13:37,2011-11-20 13:37,admin,admin
181,85350,1180,11257,841,1,0,N,N,N,CP_Drtn,TT_Task,DT_FixedDUR2,RV_OK,TK_NotStart,PET-Z2-AR-160,Epoxy Paint,2106,8,0,80,0,16,16,80,0,0,0,,,,2012-04-18 08:00,2012-04-29 16:00,,2012-04-17 08:00,2012-04-28 16:00,2012-04-17 08:00,2012-04-28 16:00,2012-04-17 08:00,2012-04-28 16:00,,2012-04-18 08:00,2012-04-29 16:00,,PT_Normal,,,,,XdCENF0HTeq247eYLE3LGg,xNjsddbYFUKRYyODpldwvg,,,N,0,0,,,2011-11-20 13:37,2011-11-20 13:37,admin,admin
182,85351,1180,11257,841,1,0,N,N,N,CP_Drtn,TT_Task,DT_FixedDUR2,RV_OK,TK_NotStart,PET-Z2-AR-170,External Cement Plaster,2107,288,256,80,0,20,20,80,0,0,0,,,,2012-04-22 08:00,2012-05-02 16:00,,2012-03-11 08:00,2012-03-21 16:00,2012-03-11 08:00,2012-03-21 16:00,2012-03-11 08:00,2012-03-21 16:00,,2012-04-22 08:00,2012-05-02 16:00,,PT_Normal,,,,,fvd3eG2iT3O6hXB8HjhGtw,dG5rWdvO40y7yMg9wqjAdg,,,N,0,0,,,2011-11-20 13:37,2011-11-20 13:37,admin,admin
183,85352,1180,11257,841,1,0,N,N,N,CP_Drtn,TT_Task,DT_FixedDUR2,RV_OK,TK_NotStart,PET-Z2-AR-120,Erection of Roof Sandwich Panel(@level 19.5&20.40),,16,0,240,0,0,0,240,0,0,0,,,,2012-03-24 08:00,2012-04-26 16:00,,2012-03-21 08:00,2012-04-24 16:00,2012-03-21 08:00,2012-04-24 16:00,2012-03-21 08:00,2012-04-24 16:00,,2012-03-24 08:00,2012-04-26 16:00,,PT_Normal,,,,,hbgLJqTOQJeBBk44AXQ/cA,,,,N,0,0,,,2011-11-20 13:37,2011-11-20 13:37,admin,admin
184,85353,1180,11257,841,1,0,N,N,N,CP_Drtn,TT_Task,DT_FixedDUR2,RV_OK,TK_NotStart,PET-Z2-AR-240,Acrylic paint for external plaster,2105,32,32,40,0,16,16,40,0,0,0,,,,2012-05-03 08:00,2012-05-08 16:00,,2012-04-29 08:00,2012-05-03 16:00,2012-04-29 08:00,2012-05-03 16:00,2012-04-29 08:00,2012-05-03 16:00,,2012-05-03 08:00,2012-05-08 16:00,,PT_Normal,,,,,3wRVt8EkQJez7vdPiQ/L2w,+BgAPdB5GECVv43y2XqZJw,,,N,0,0,,,2011-11-20 13:37,2011-11-20 13:37,admin,admin
185,85354,1180,11257,841,1,0,N,N,N,CP_Drtn,TT_Task,DT_FixedDUR2,RV_OK,TK_NotStart,PET-Z2-AR-140,Fair face conc. guard base(kerb),,8,0,120,0,0,0,120,0,0,0,,,,2012-04-01 08:00,2012-04-17 16:00,,2012-03-31 08:00,2012-04-16 16:00,2012-03-31 08:00,2012-04-16 16:00,2012-03-31 08:00,2012-04-16 16:00,,2012-04-01 08:00,2012-04-17 16:00,,PT_Normal,,,,,V3Lh1tdyTemhAEo+n3NUrw,,,,N,0,0,,,2011-11-20 13:37,2011-11-20 13:37,admin,admin
186,85355,1180,11257,841,1,0,N,N,N,CP_Drtn,TT_Task,DT_FixedDUR2,RV_OK,TK_NotStart,PET-Z2-AR-260,Handing over & comissioning,,8,8,40,0,0,0,40,0,0,0,,,,2012-05-03 08:00,2012-05-08 16:00,,2012-05-02 08:00,2012-05-07 16:00,2012-05-02 08:00,2012-05-07 16:00,2012-05-02 08:00,2012-05-07 16:00,,2012-05-03 08:00,2012-05-08 16:00,,PT_Normal,,,,,MLQ6lVwTQqiSKNj6I7n5LQ,,,,N,0,0,,,2011-11-20 13:37,2011-11-20 13:37,admin,admin
187,85356,1180,11257,841,1,0,N,N,N,CP_Drtn,TT_Task,DT_FixedDUR2,RV_OK,TK_NotStart,PET-Z2-AR-250,Final touch up,,8,0,24,0,0,0,24,0,0,0,,,,2012-04-30 08:00,2012-05-02 16:00,,2012-04-29 08:00,2012-05-01 16:00,2012-04-29 08:00,2012-05-01 16:00,2012-04-29 08:00,2012-05-01 16:00,,2012-04-30 08:00,2012-05-02 16:00,,PT_Normal,,,,,Wji6Ca8dSu26AZZf0pivtg,,,,N,0,0,,,2011-11-20 13:37,2011-11-20 13:37,admin,admin
188,85357,1180,11257,841,1,0,N,N,N,CP_Drtn,TT_Task,DT_FixedDUR2,RV_OK,TK_NotStart,PET-Z2-AR-210,Louvers erection,,24,24,80,0,0,0,80,0,0,0,,,,2012-04-28 08:00,2012-05-08 16:00,,2012-04-24 08:00,2012-05-05 16:00,2012-04-24 08:00,2012-05-05 16:00,2012-04-24 08:00,2012-05-05 16:00,,2012-04-28 08:00,2012-05-08 16:00,,PT_Normal,,,,,rBOZovPKTaSopP4yixsgLw,,,,N,0,0,,,2011-11-20 13:37,2011-11-20 13:37,admin,admin
189,85358,1180,11257,841,1,0,N,N,N,CP_Drtn,TT_Task,DT_FixedDUR2,RV_OK,TK_NotStart,PET-Z2-AR-220,Windows erection,,24,24,80,0,0,0,80,0,0,0,,,,2012-04-28 08:00,2012-05-08 16:00,,2012-04-24 08:00,2012-05-05 16:00,2012-04-24 08:00,2012-05-05 16:00,2012-04-24 08:00,2012-05-05 16:00,,2012-04-28 08:00,2012-05-08 16:00,,PT_Normal,,,,,e3LmN4fYRI6mGm3lGtyjNg,,,,N,0,0,,,2011-11-20 13:37,2011-11-20 13:37,admin,admin
190,85359,1180,11257,841,1,0,N,N,N,CP_Drtn,TT_Task,DT_FixedDUR2,RV_OK,TK_NotStart,PET-Z2-AR-130,Steel structure paintings,,56,0,240,0,0,0,240,0,0,0,,,,2012-03-27 08:00,2012-04-30 16:00,,2012-03-19 08:00,2012-04-22 16:00,2012-03-19 08:00,2012-04-22 16:00,2012-03-19 08:00,2012-04-22 16:00,,2012-03-27 08:00,2012-04-30 16:00,,PT_Normal,,,,,gkltT2LVSv260j3haO+WLw,,,,N,0,0,,,2011-11-20 13:37,2011-11-20 13:37,admin,admin
191,85360,1180,11257,841,1,0,N,N,N,CP_Drtn,TT_Task,DT_FixedDUR2,RV_OK,TK_NotStart,PET-Z2-AR-180,Guard bollard erection,,208,200,56,0,0,0,56,0,0,0,,,,2012-04-25 08:00,2012-05-02 16:00,,2012-03-26 08:00,2012-04-02 16:00,2012-03-26 08:00,2012-04-02 16:00,2012-03-26 08:00,2012-04-02 16:00,,2012-04-25 08:00,2012-05-02 16:00,,PT_Normal,,,,,Z5MtJSN/TPuoF2nKqYNGaA,,,,N,0,0,,,2011-11-20 13:37,2011-11-20 13:37,admin,admin
192,85361,1180,11258,841,1,0,N,N,N,CP_Drtn,TT_Task,DT_FixedDUR2,RV_OK,TK_NotStart,PET-Z2-CC-235,Columns & rafters (@level 21.85&22.75),,16,0,56,0,0,0,56,0,0,0,,,,2012-03-15 08:00,2012-03-22 16:00,,2012-03-13 08:00,2012-03-20 16:00,2012-03-13 08:00,2012-03-20 16:00,2012-03-13 08:00,2012-03-20 16:00,,2012-03-15 08:00,2012-03-22 16:00,,PT_Normal,,,,,nL7Jl/ZqTsWxhH9wDQxhbA,,,,N,0,0,,,2011-11-20 13:37,2011-11-20 13:37,admin,admin
193,85362,1180,11258,841,1,0,N,N,N,CP_Drtn,TT_Task,DT_FixedDUR2,RV_OK,TK_NotStart,PET-Z2-CC-290,Steel structure erection(bracings & tie rods),2118,128,120,120,0,30,30,120,0,0,0,,,,2012-04-01 08:00,2012-04-17 16:00,,2012-03-13 08:00,2012-03-29 16:00,2012-03-13 08:00,2012-03-29 16:00,2012-03-13 08:00,2012-03-29 16:00,,2012-04-01 08:00,2012-04-17 16:00,,PT_Normal,,,,,svWoatXxQpSR76J1wVMqEQ,,,,N,0,0,,,2011-11-20 13:37,2011-11-20 13:37,admin,admin
194,85363,1180,11258,841,1,0,N,N,N,CP_Drtn,TT_Task,DT_FixedDUR2,RV_OK,TK_NotStart,PET-Z2-CC-100,Demolishing Of Existing Concrete,,8,0,24,0,0,0,24,0,0,0,,,,2011-12-01 08:00,2011-12-04 16:00,,2011-11-30 08:00,2011-12-03 16:00,2011-11-30 08:00,2011-12-03 16:00,2011-11-30 08:00,2011-12-03 16:00,,2011-12-01 08:00,2011-12-04 16:00,,PT_Normal,,,,,RvzgXGiuT9aB4Nv2y5TfTg,lVdCsxJtSECx+NyOdXGwyA,,,N,0,0,,,2011-11-20 13:37,2011-11-20 13:37,admin,admin
195,85364,1180,11258,841,1,0,N,N,N,CP_Drtn,TT_Task,DT_FixedDUR2,RV_OK,TK_NotStart,PET-Z2-CC-110,Excavation,,8,0,96,0,0,0,96,0,0,0,,,,2011-12-05 08:00,2011-12-18 16:00,,2011-12-04 08:00,2011-12-17 16:00,2011-12-04 08:00,2011-12-17 16:00,2011-12-04 08:00,2011-12-17 16:00,,2011-12-05 08:00,2011-12-18 16:00,,PT_Normal,,,,,XfVItwxKT+SgiCD+HXAUhw,QRUsee8KtEOOppZIwEDmpA,,,N,0,0,,,2011-11-20 13:37,2011-11-20 13:37,admin,admin
196,85365,1180,11258,841,1,0,N,N,N,CP_Drtn,TT_Task,DT_FixedDUR2,RV_OK,TK_NotStart,PET-Z2-CC-130,Replacement Under Footings,,8,0,96,0,0,0,96,0,0,0,,,,2011-12-19 08:00,2012-01-01 16:00,,2011-12-18 08:00,2011-12-31 16:00,2011-12-18 08:00,2011-12-31 16:00,2011-12-18 08:00,2011-12-31 16:00,,2011-12-19 08:00,2012-01-01 16:00,,PT_Normal,,,,,/aZg2TY2Rge9raR8pS1d6A,eoilmfaoLEKNxI0neTli5Q,,,N,0,0,,,2011-11-20 13:37,2011-11-20 13:37,admin,admin
197,85366,1180,11258,841,1,0,N,N,N,CP_Drtn,TT_Task,DT_FixedDUR2,RV_OK,TK_NotStart,PET-Z2-CC-150,Plain Concrete footings,2104,8,0,80,0,12,12,80,0,0,0,,,,2012-01-02 08:00,2012-01-12 16:00,,2012-01-01 08:00,2012-01-11 16:00,2012-01-01 08:00,2012-01-11 16:00,2012-01-01 08:00,2012-01-11 16:00,,2012-01-02 08:00,2012-01-12 16:00,,PT_Normal,,,,,78hKHrcFQva+MWkXnuvo1A,5YIA18cGaUuRiz10mjnkkQ,,,N,0,0,,,2011-11-20 13:37,2011-11-20 13:37,admin,admin
198,85367,1180,11258,841,1,0,N,N,N,CP_Drtn,TT_Task,DT_FixedDUR2,RV_OK,TK_NotStart,PET-Z2-CC-160,R.C. footings & tie beams &planting tie beams,2104,8,0,120,0,185,185,120,0,0,0,,,,2012-01-10 08:00,2012-01-26 16:00,,2012-01-09 08:00,2012-01-25 16:00,2012-01-09 08:00,2012-01-25 16:00,2012-01-09 08:00,2012-01-25 16:00,,2012-01-10 08:00,2012-01-26 16:00,,PT_Normal,,,,,e3wa6wpeQ1eubAma9fs8xg,wa6WUAxUu0extTooVW3Kfg,,,N,0,0,,,2011-11-20 13:37,2011-11-20 13:37,admin,admin
199,85368,1180,11258,841,1,0,N,N,N,CP_Drtn,TT_Task,DT_FixedDUR2,RV_OK,TK_NotStart,PET-Z2-CC-170,Bituminous waterproofing for foundations,,8,0,80,0,0,0,80,0,0,0,,,,2012-01-18 08:00,2012-01-29 16:00,,2012-01-17 08:00,2012-01-28 16:00,2012-01-17 08:00,2012-01-28 16:00,2012-01-17 08:00,2012-01-28 16:00,,2012-01-18 08:00,2012-01-29 16:00,,PT_Normal,,,,,VVWbfa86RN2gYQ6P+v+8SQ,YI+ANGE/jUuQxgTw7kfnZA,,,N,0,0,,,2011-11-20 13:37,2011-11-20 13:37,admin,admin
200,85369,1180,11258,841,1,0,N,N,N,CP_Drtn,TT_Task,DT_FixedDUR2,RV_OK,TK_NotStart,PET-Z2-CC-220,Steel structure erection(columns & rafters),2118,8,0,160,0,100,100,160,0,0,0,,,,2012-02-08 08:00,2012-03-01 16:00,,2012-02-07 08:00,2012-02-29 16:00,2012-02-07 08:00,2012-02-29 16:00,2012-02-07 08:00,2012-02-29 16:00,,2012-02-08 08:00,2012-03-01 16:00,,PT_Normal,,,,,t/uKMz11Q4mwXfr7giWkYQ,oI/+HulBMUCqedQEBMoQPw,,,N,0,0,,,2011-11-20 13:37,2011-11-20 13:37,admin,admin
201,85370,1180,11258,841,1,0,N,N,N,CP_Drtn,TT_Task,DT_FixedDUR2,RV_OK,TK_NotStart,PET-Z2-CC-190,Backfilling under plain concrete,,8,0,80,0,0,0,80,0,0,0,,,,2012-01-30 08:00,2012-02-09 16:00,,2012-01-29 08:00,2012-02-08 16:00,2012-01-29 08:00,2012-02-08 16:00,2012-01-29 08:00,2012-02-08 16:00,,2012-01-30 08:00,2012-02-09 16:00,,PT_Normal,,,,,2h0rd/i2RGSGyi/2YTdyAg,HzfXh1d0a0qG8YubyfOiTQ,,,N,0,0,,,2011-11-20 13:37,2011-11-20 13:37,admin,admin
202,85371,1180,11258,841,1,0,N,N,N,CP_Drtn,TT_Task,DT_FixedDUR2,RV_OK,TK_NotStart,PET-Z2-CC-250,Slab On Grade,,8,0,120,0,0,0,120,0,0,0,,,,2012-03-14 08:00,2012-03-31 16:00,,2012-03-13 08:00,2012-03-29 16:00,2012-03-13 08:00,2012-03-29 16:00,2012-03-13 08:00,2012-03-29 16:00,,2012-03-14 08:00,2012-03-31 16:00,,PT_Normal,,,,,Loz/MdsMSwKiiBCkmsQqbw,x4jGlTe66UizPyxg35xOgg,,,N,0,0,,,2011-11-20 13:37,2011-11-20 13:37,admin,admin
203,85372,1180,11258,841,1,0,N,N,N,CP_Drtn,TT_Task,DT_FixedDUR2,RV_OK,TK_NotStart,PET-Z2-CC-260,Plain Concrete Screed,,8,0,200,0,0,0,200,0,0,0,,,,2012-03-20 08:00,2012-04-17 16:00,,2012-03-19 08:00,2012-04-16 16:00,2012-03-19 08:00,2012-04-16 16:00,2012-03-19 08:00,2012-04-16 16:00,,2012-03-20 08:00,2012-04-17 16:00,,PT_Normal,,,,,rusSXcAaRFuAASI46D3LIw,CuUH5Tx5y0WYB4bgDxsYvA,,,N,0,0,,,2011-11-20 13:37,2011-11-20 13:37,admin,admin
204,85373,1180,11258,841,1,0,N,N,N,CP_Drtn,TT_Task,DT_FixedDUR2,RV_OK,TK_NotStart,PET-Z2-CC-180,RC for pedestals,,8,0,80,0,0,0,80,0,0,0,,,,2012-01-28 08:00,2012-02-07 16:00,,2012-01-26 08:00,2012-02-06 16:00,2012-01-26 08:00,2012-02-06 16:00,2012-01-26 08:00,2012-02-06 16:00,,2012-01-28 08:00,2012-02-07 16:00,,PT_Normal,,,,,SoS3eztzRFGaMuscbw15SA,,,,N,0,0,,,2011-11-20 13:37,2011-11-20 13:37,admin,admin
205,85374,1180,11258,841,1,0,N,N,N,CP_Drtn,TT_Task,DT_FixedDUR2,RV_OK,TK_NotStart,PET-Z2-CC-230,Plain concrete 50mm thick,,8,0,80,0,0,0,80,0,0,0,,,,2012-03-03 08:00,2012-03-13 16:00,,2012-03-01 08:00,2012-03-12 16:00,2012-03-01 08:00,2012-03-12 16:00,2012-03-01 08:00,2012-03-12 16:00,,2012-03-03 08:00,2012-03-13 16:00,,PT_Normal,,,,,l2t8XY5kS/WJTwcJdr7K0g,,,,N,0,0,,,2011-11-20 13:37,2011-11-20 13:37,admin,admin
206,85375,1180,11258,841,1,0,N,N,N,CP_Drtn,TT_Task,DT_FixedDUR2,RV_OK,TK_NotStart,PET-Z2-CC-200,Anchors for steel structure,,8,0,64,0,0,0,64,0,0,0,,,,2012-01-30 08:00,2012-02-07 16:00,,2012-01-29 08:00,2012-02-06 16:00,2012-01-29 08:00,2012-02-06 16:00,2012-01-29 08:00,2012-02-06 16:00,,2012-01-30 08:00,2012-02-07 16:00,,PT_Normal,,,,,hRB7nHS0QtuKgzskBdUi2Q,,,,N,0,0,,,2011-11-20 13:37,2011-11-20 13:37,admin,admin
207,85376,1180,11258,841,1,0,N,N,N,CP_Drtn,TT_Task,DT_FixedDUR2,RV_OK,TK_NotStart,PET-Z2-CC-240,Membrane sheet 400 micron,,8,0,80,0,0,0,80,0,0,0,,,,2012-03-03 08:00,2012-03-13 16:00,,2012-03-01 08:00,2012-03-12 16:00,2012-03-01 08:00,2012-03-12 16:00,2012-03-01 08:00,2012-03-12 16:00,,2012-03-03 08:00,2012-03-13 16:00,,PT_Normal,,,,,5mJVnrXOT86jpZuzTmvX0Q,,,,N,0,0,,,2011-11-20 13:37,2011-11-20 13:37,admin,admin
208,85377,1180,11258,841,1,0,N,N,N,CP_Drtn,TT_Task,DT_FixedDUR2,RV_OK,TK_NotStart,PET-Z2-CC-120,Detect underground Utilities,,8,0,96,0,0,0,96,0,0,0,,,,2011-12-05 08:00,2011-12-18 16:00,,2011-12-04 08:00,2011-12-17 16:00,2011-12-04 08:00,2011-12-17 16:00,2011-12-04 08:00,2011-12-17 16:00,,2011-12-05 08:00,2011-12-18 16:00,,PT_Normal,,,,,U9LILl5gS5ugJZf9f0KlEw,,,,N,0,0,,,2011-11-20 13:37,2011-11-20 13:37,admin,admin
209,85378,1180,11258,841,1,0,N,N,N,CP_Drtn,TT_Task,DT_FixedDUR2,RV_OK,TK_NotStart,PET-Z2-CC-210,Concrete beams & columns for masonry,,24,0,240,0,0,0,240,0,0,0,,,,2012-02-08 08:00,2012-03-13 16:00,,2012-02-05 08:00,2012-03-10 16:00,2012-02-05 08:00,2012-03-10 16:00,2012-02-05 08:00,2012-03-10 16:00,,2012-02-08 08:00,2012-03-13 16:00,,PT_Normal,,,,,FUCGPhdtTIC125ObshN3hw,,,,N,0,0,,,2011-11-20 13:37,2011-11-20 13:37,admin,admin
210,85379,1180,11258,841,1,0,N,N,N,CP_Drtn,TT_Task,DT_FixedDUR2,RV_OK,TK_NotStart,PET-Z2-CC-140,Utilities diversion,,8,0,144,0,0,0,144,0,0,0,,,,2011-12-19 08:00,2012-01-08 16:00,,2011-12-18 08:00,2012-01-07 16:00,2011-12-18 08:00,2012-01-07 16:00,2011-12-18 08:00,2012-01-07 16:00,,2011-12-19 08:00,2012-01-08 16:00,,PT_Normal,,,,,G9vOZkQnTjiaV6L6ectJKg,,,,N,0,0,,,2011-11-20 13:37,2011-11-20 13:37,admin,admin
211,85380,1180,11258,841,1,0,N,N,N,CP_Drtn,TT_Task,DT_FixedDUR2,RV_OK,TK_NotStart,PET-Z2-CC-270,Stainless steel pane fixation,,8,0,56,0,0,0,56,0,0,0,,,,2012-04-10 08:00,2012-04-17 16:00,,2012-04-09 08:00,2012-04-16 16:00,2012-04-09 08:00,2012-04-16 16:00,2012-04-09 08:00,2012-04-16 16:00,,2012-04-10 08:00,2012-04-17 16:00,,PT_Normal,,,,,yrX8dhYARbu4b0TuyjtSBQ,,,,N,0,0,,,2011-11-20 13:37,2011-11-20 13:37,admin,admin
212,85381,1180,11258,841,1,0,N,N,N,CP_Drtn,TT_Task,DT_FixedDUR2,RV_OK,TK_NotStart,PET-Z2-CC-280,Expansion joint,,8,0,56,0,0,0,56,0,0,0,,,,2012-04-10 08:00,2012-04-17 16:00,,2012-04-09 08:00,2012-04-16 16:00,2012-04-09 08:00,2012-04-16 16:00,2012-04-09 08:00,2012-04-16 16:00,,2012-04-10 08:00,2012-04-17 16:00,,PT_Normal,,,,,0jUHvA6TSciybvcQxy4iuA,,,,N,0,0,,,2011-11-20 13:37,2011-11-20 13:37,admin,admin
213,85382,1180,11258,841,1,0,N,N,N,CP_Drtn,TT_Task,DT_FixedDUR2,RV_OK,TK_NotStart,PET-Z2-CC-225,Steel structure erection(purlins & portal frames),2118,8,0,160,0,70,70,160,0,0,0,,,,2012-02-20 08:00,2012-03-13 16:00,,2012-02-19 08:00,2012-03-12 16:00,2012-02-19 08:00,2012-03-12 16:00,2012-02-19 08:00,2012-03-12 16:00,,2012-02-20 08:00,2012-03-13 16:00,,PT_Normal,,,,,dD2obR46QH+HYR+HfsT2rQ,KglGeUktROiV6+cgO13PMA,,,N,0,0,,,2011-11-20 13:37,2011-11-20 13:37,admin,admin
214,85383,1180,11260,841,1,0,N,N,N,CP_Drtn,TT_Task,DT_FixedDUR2,RV_OK,TK_NotStart,UHT 270,Over head sectional Door erection,,0,0,24,0,0,0,24,0,0,0,,,,2012-04-05 08:00,2012-04-08 16:00,,2012-04-05 08:00,2012-04-08 16:00,2012-04-05 08:00,2012-04-08 16:00,2012-04-05 08:00,2012-04-08 16:00,,2012-04-05 08:00,2012-04-08 16:00,,PT_Normal,,,,,8j+Zp6GgTEKqem3Rvu4MJA,HqckL1yxQQ6p/+OMagy7/w,,,Y,0,0,,,2011-11-20 13:37,2011-11-20 13:37,admin,admin
215,85384,1180,11260,841,1,0,N,N,N,CP_Drtn,TT_Task,DT_FixedDUR2,RV_OK,TK_NotStart,UHT 170,Dismantle Doors & Louvers,,72,0,32,0,0,0,32,0,0,0,,,,2012-04-16 08:00,2012-04-19 16:00,,2012-04-05 08:00,2012-04-09 16:00,2012-04-05 08:00,2012-04-09 16:00,2012-04-05 08:00,2012-04-09 16:00,,2012-04-16 08:00,2012-04-19 16:00,,PT_Normal,,,,,1vqC/PJbS8C06AIvZiwr2A,3EeuGMqDDEa7N00fuREHSg,,,N,0,0,,,2011-11-20 13:37,2011-11-20 13:37,admin,admin
216,85385,1180,11260,841,1,0,N,N,N,CP_Drtn,TT_Task,DT_FixedDUR2,RV_OK,TK_NotStart,UHT 220,Dismantle Sandwich Panel,,72,72,40,0,0,0,40,0,0,0,,,,2012-04-21 08:00,2012-04-25 16:00,,2012-04-10 08:00,2012-04-15 16:00,2012-04-10 08:00,2012-04-15 16:00,2012-04-10 08:00,2012-04-15 16:00,,2012-04-21 08:00,2012-04-25 16:00,,PT_Normal,,,,,ZE4XEanFQXqgacvYYzdmMg,pBPdI/zT2k+kCKcNvGx2Kg,,,N,0,0,,,2011-11-20 13:37,2011-11-20 13:37,admin,admin
217,85386,1180,11260,841,1,0,N,N,N,CP_Drtn,TT_Task,DT_FixedDUR2,RV_OK,TK_NotStart,UHT 150,Sandwich Panel erection,,160,96,56,0,0,0,56,0,0,0,,,,2012-03-12 08:00,2012-03-19 16:00,,2012-02-18 08:00,2012-02-25 16:00,2012-02-18 08:00,2012-02-25 16:00,2012-02-18 08:00,2012-02-25 16:00,,2012-03-12 08:00,2012-03-19 16:00,,PT_Normal,,,,,BvpiTYivReaZhSUlo+HiPA,mx5sj8xGQU+M+podjLAxBA,,,N,0,0,,,2011-11-20 13:37,2011-11-20 13:37,admin,admin
218,85387,1180,11260,841,1,0,N,N,N,CP_Drtn,TT_Task,DT_FixedDUR2,RV_OK,TK_NotStart,UHT 230,Polyurethane Flooring,,0,0,80,0,0,0,80,0,0,0,,,,2012-04-09 08:00,2012-04-19 16:00,,2012-04-09 08:00,2012-04-19 16:00,2012-04-09 08:00,2012-04-19 16:00,2012-04-09 08:00,2012-04-19 16:00,,2012-04-09 08:00,2012-04-19 16:00,,PT_Normal,,,,,lJz078lbT0udeb+5DP6tKw,dRvY0/CLMk+5XQE2mIj/ug,,,Y,0,0,,,2011-11-20 13:37,2011-11-20 13:37,admin,admin
219,85388,1180,11260,841,1,0,N,N,N,CP_Drtn,TT_Task,DT_FixedDUR2,RV_OK,TK_NotStart,UHT 180,Doors erection,,0,0,24,0,0,0,24,0,0,0,,,,2012-04-05 08:00,2012-04-08 16:00,,2012-04-05 08:00,2012-04-08 16:00,2012-04-05 08:00,2012-04-08 16:00,2012-04-05 08:00,2012-04-08 16:00,,2012-04-05 08:00,2012-04-08 16:00,,PT_Normal,,,,,kVR+00gTRzWL9n9FUErjBw,S8hbNcMIuEm80L9ZYVFP3Q,,,Y,0,0,,,2011-11-20 13:37,2011-11-20 13:37,admin,admin
220,85389,1180,11260,841,1,0,N,N,N,CP_Drtn,TT_Task,DT_FixedDUR2,RV_OK,TK_NotStart,UHT 160,Epoxy Paint for old sandwich panel & column base,2106,64,24,80,0,16,16,80,0,0,0,,,,2012-03-20 08:00,2012-03-31 16:00,,2012-03-11 08:00,2012-03-21 16:00,2012-03-11 08:00,2012-03-21 16:00,2012-03-11 08:00,2012-03-21 16:00,,2012-03-20 08:00,2012-03-31 16:00,,PT_Normal,,,,,RbVjmGZ3TfesvEug5ctAHA,dj73gBk5VkGxQ5YwyRdv7A,,,N,0,0,,,2011-11-20 13:37,2011-11-20 13:37,admin,admin
221,85390,1180,11260,841,1,0,N,N,N,CP_Drtn,TT_Task,DT_FixedDUR2,RV_OK,TK_NotStart,UHT 240,Final touch up,,0,0,16,0,0,0,16,0,0,0,,,,2012-04-21 08:00,2012-04-22 16:00,,2012-04-21 08:00,2012-04-22 16:00,2012-04-21 08:00,2012-04-22 16:00,2012-04-21 08:00,2012-04-22 16:00,,2012-04-21 08:00,2012-04-22 16:00,,PT_Normal,,,,,ytAk+HDtRPC+tdyzm1HzKA,,,,Y,0,0,,,2011-11-20 13:37,2011-11-20 13:37,admin,admin
222,85391,1180,11260,841,1,0,N,N,N,CP_Drtn,TT_Task,DT_FixedDUR2,RV_OK,TK_NotStart,UHT 250,Handing over & comissioning,,0,0,24,0,0,0,24,0,0,0,,,,2012-04-23 08:00,2012-04-25 16:00,,2012-04-23 08:00,2012-04-25 16:00,2012-04-23 08:00,2012-04-25 16:00,2012-04-23 08:00,2012-04-25 16:00,,2012-04-23 08:00,2012-04-25 16:00,,PT_Normal,,,,,8mB/4UkHQYenAmxA63B+Aw,,,,Y,0,0,,,2011-11-20 13:37,2011-11-20 13:37,admin,admin
223,85392,1180,11260,841,1,0,N,N,N,CP_Drtn,TT_Task,DT_FixedDUR2,RV_OK,TK_NotStart,UHT 200,Louvers erection,,112,112,32,0,0,0,32,0,0,0,,,,2012-04-22 08:00,2012-04-25 16:00,,2012-04-05 08:00,2012-04-09 16:00,2012-04-05 08:00,2012-04-09 16:00,2012-04-05 08:00,2012-04-09 16:00,,2012-04-22 08:00,2012-04-25 16:00,,PT_Normal,,,,,RvhIGxpEQpGfbyszdlsXFQ,,,,N,0,0,,,2011-11-20 13:37,2011-11-20 13:37,admin,admin
224,85393,1180,11260,841,1,0,N,N,N,CP_Drtn,TT_Task,DT_FixedDUR2,RV_OK,TK_NotStart,UHT 100,Utilities diversion(Electrical),,160,0,80,0,0,0,80,0,0,0,,,,2011-12-18 08:00,2011-12-28 16:00,,2011-11-23 08:00,2011-12-05 16:00,2011-11-23 08:00,2011-12-05 16:00,2011-11-23 08:00,2011-12-05 16:00,,2011-12-18 08:00,2011-12-28 16:00,,PT_Normal,,,,,LsOGBXTYRSq8eGDdXkDkCA,,,,N,0,0,,,2011-11-20 13:37,2011-11-20 13:37,admin,admin
225,85394,1180,11260,841,1,0,N,N,N,CP_Drtn,TT_Task,DT_FixedDUR2,RV_OK,TK_NotStart,UHT 260,Guard bollard erection,,40,40,32,0,0,0,32,0,0,0,,,,2012-04-01 08:00,2012-04-04 16:00,,2012-03-26 08:00,2012-03-29 16:00,2012-03-26 08:00,2012-03-29 16:00,2012-03-26 08:00,2012-03-29 16:00,,2012-04-01 08:00,2012-04-04 16:00,,PT_Normal,,,,,kmgg4zpPTdKYew83rsiA2Q,,,,N,0,0,,,2011-11-20 13:37,2011-11-20 13:37,admin,admin
226,85395,1180,11261,841,1,0,N,N,N,CP_Drtn,TT_Task,DT_FixedDUR2,RV_OK,TK_NotStart,UHT 130,Plain concrete screed (150mm),,160,0,72,0,0,0,72,0,0,0,,,,2012-02-14 08:00,2012-02-23 16:00,,2012-01-22 08:00,2012-01-31 16:00,2012-01-22 08:00,2012-01-31 16:00,2012-01-22 08:00,2012-01-31 16:00,,2012-02-14 08:00,2012-02-23 16:00,,PT_Normal,,,,,67fljiKwRO2iZobm8RZExQ,vewLjDJul0CmWy4StnQ7Cw,,,N,0,0,,,2011-11-20 13:37,2011-11-20 13:37,admin,admin
227,85396,1180,11261,841,1,0,N,N,N,CP_Drtn,TT_Task,DT_FixedDUR2,RV_OK,TK_NotStart,UHT 140,Fair face conc. guard base(kerb),,160,0,112,0,0,0,112,0,0,0,,,,2012-02-25 08:00,2012-03-11 16:00,,2012-02-01 08:00,2012-02-16 16:00,2012-02-01 08:00,2012-02-16 16:00,2012-02-01 08:00,2012-02-16 16:00,,2012-02-25 08:00,2012-03-11 16:00,,PT_Normal,,,,,vVHAQveBRxKncbinkxWmCg,,,,N,0,0,,,2011-11-20 13:37,2011-11-20 13:37,admin,admin
228,85397,1180,11261,841,1,0,N,N,N,CP_Drtn,TT_Task,DT_FixedDUR2,RV_OK,TK_NotStart,UHT 120,Utilities diversion (Plumbing),,160,0,80,0,0,0,80,0,0,0,,,,2012-02-02 08:00,2012-02-13 16:00,,2012-01-10 08:00,2012-01-21 16:00,2012-01-10 08:00,2012-01-21 16:00,2012-01-10 08:00,2012-01-21 16:00,,2012-02-02 08:00,2012-02-13 16:00,,PT_Normal,,,,,I7EZ+OnvTeGH5vjXjcaiOw,,,,N,0,0,,,2011-11-20 13:37,2011-11-20 13:37,admin,admin
229,85398,1180,11261,841,1,0,N,N,N,CP_Drtn,TT_Task,DT_FixedDUR2,RV_OK,TK_NotStart,UHT 190,Stainless steel grating cover erection,,272,272,80,0,0,0,80,0,0,0,,,,2012-03-28 08:00,2012-04-08 16:00,,2012-02-18 08:00,2012-02-28 16:00,2012-02-18 08:00,2012-02-28 16:00,2012-02-18 08:00,2012-02-28 16:00,,2012-03-28 08:00,2012-04-08 16:00,,PT_Normal,,,,,IaxGNo/zQDKr56xZagehfQ,,,,N,0,0,,,2011-11-20 13:37,2011-11-20 13:37,admin,admin
230,85399,1180,11261,841,1,0,N,N,N,CP_Drtn,TT_Task,DT_FixedDUR2,RV_OK,TK_NotStart,UHT 110,Demolishing Slab on Grade,,160,0,240,0,0,0,240,0,0,0,,,,2011-12-29 08:00,2012-02-01 16:00,,2011-12-06 08:00,2012-01-09 16:00,2011-12-06 08:00,2012-01-09 16:00,2011-12-06 08:00,2012-01-09 16:00,,2011-12-29 08:00,2012-02-01 16:00,,PT_Normal,,,,,2PhfgR/ZTLmv7kfg+47I8Q,,,,N,0,0,,,2011-11-20 13:37,2011-11-20 13:37,admin,admin
231,85400,1180,11278,841,1,0,N,N,N,CP_Drtn,TT_Task,DT_FixedDrtn,RV_OK,TK_NotStart,SD 260,Doors Approval,,0,0,80,0,0,0,80,0,0,0,,,,2012-01-15 08:00,2012-01-25 16:00,,2012-01-15 08:00,2012-01-25 16:00,2012-01-15 08:00,2012-01-25 16:00,2012-01-15 08:00,2012-01-25 16:00,,2012-01-15 08:00,2012-01-25 16:00,,PT_Normal,,,,,d/1wqaC/Sp6Jst1NBAjhhQ,Hy6J4Rw8HEGeTclBys0xTg,,,Y,0,0,,,2011-11-20 13:37,2011-11-20 14:03,admin,admin
232,85401,1180,11277,841,1,0,N,N,N,CP_Drtn,TT_Task,DT_FixedDrtn,RV_OK,TK_NotStart,SD 200,Doors submittal,,0,0,80,0,0,0,80,0,0,0,,,,2011-12-29 08:00,2012-01-09 16:00,,2011-12-29 08:00,2012-01-09 16:00,2011-12-29 08:00,2012-01-09 16:00,2011-12-29 08:00,2012-01-09 16:00,,2011-12-29 08:00,2012-01-09 16:00,,PT_Normal,,,,,ltwm1tolTByf+f0GURtNag,,,,Y,0,0,,,2011-11-20 13:37,2011-11-20 14:02,admin,admin
233,85402,1180,11277,841,1,0,N,N,N,CP_Drtn,TT_Task,DT_FixedDrtn,RV_OK,TK_NotStart,SD 140,Steel structure submittal,,40,0,56,0,0,0,56,0,0,0,,,,2011-12-03 08:00,2011-12-10 16:00,,2011-11-26 08:00,2011-12-04 16:00,2011-11-26 08:00,2011-12-04 16:00,2011-11-26 08:00,2011-12-04 16:00,,2011-12-03 08:00,2011-12-10 16:00,,PT_Normal,,,,,TOh5upr1QNO6jCvYlbo7LA,yuPzp0G0gUqazOYqnD9zNw,,,N,0,0,,,2011-11-20 13:37,2011-11-20 14:02,admin,admin
234,85403,1180,11278,841,1,0,N,N,N,CP_Drtn,TT_Task,DT_FixedDUR2,RV_OK,TK_NotStart,SD 240,Steel structure Approval,,40,0,56,0,0,0,56,0,0,0,,,,2011-12-19 08:00,2011-12-26 16:00,,2011-12-13 08:00,2011-12-20 16:00,2011-12-13 08:00,2011-12-20 16:00,2011-12-13 08:00,2011-12-20 16:00,,2011-12-19 08:00,2011-12-26 16:00,,PT_Normal,,,,,sBzViv+CSU+F6N182zzXIQ,Hy6J4Rw8HEGeTclBys0xTg,,,N,0,0,,,2011-11-20 13:37,2011-11-20 14:03,admin,admin
235,85404,1180,11277,841,1,0,N,N,N,CP_Drtn,TT_Task,DT_FixedDrtn,RV_OK,TK_NotStart,SD 160,Masonry submittal,,104,0,56,0,0,0,56,0,0,0,,,,2012-01-08 08:00,2012-01-15 16:00,,2011-12-24 08:00,2011-12-31 16:00,2011-12-24 08:00,2011-12-31 16:00,2011-12-24 08:00,2011-12-31 16:00,,2012-01-08 08:00,2012-01-15 16:00,,PT_Normal,,,,,1NCRYpjZTeuCymKf+a2UGQ,yuPzp0G0gUqazOYqnD9zNw,,,N,0,0,,,2011-11-20 13:37,2011-11-20 14:02,admin,admin
236,85405,1180,11278,841,1,0,N,N,N,CP_Drtn,TT_Task,DT_FixedDUR2,RV_OK,TK_NotStart,SD 250,Masonry Approval,,104,40,56,0,0,0,56,0,0,0,,,,2012-01-24 08:00,2012-01-31 16:00,,2012-01-09 08:00,2012-01-16 16:00,2012-01-09 08:00,2012-01-16 16:00,2012-01-09 08:00,2012-01-16 16:00,,2012-01-24 08:00,2012-01-31 16:00,,PT_Normal,,,,,54at110iSl+4ioqjGtNOPw,Hy6J4Rw8HEGeTclBys0xTg,,,N,0,0,,,2011-11-20 13:37,2011-11-20 14:03,admin,admin
237,85406,1180,11277,841,1,0,N,N,N,CP_Drtn,TT_Task,DT_FixedDrtn,RV_OK,TK_NotStart,SD 220,Metal fabrications submittal,,72,0,56,0,0,0,56,0,0,0,,,,2012-01-09 08:00,2012-01-16 16:00,,2011-12-29 08:00,2012-01-05 16:00,2011-12-29 08:00,2012-01-05 16:00,2011-12-29 08:00,2012-01-05 16:00,,2012-01-09 08:00,2012-01-16 16:00,,PT_Normal,,,,,gQsp6cvBS2qS2ldw1lCOFQ,i8FZXkCYckmh4dS0eUXPTA,,,N,0,0,,,2011-11-20 13:37,2011-11-20 14:02,admin,admin
238,85407,1180,11278,841,1,0,N,N,N,CP_Drtn,TT_Task,DT_FixedDUR2,RV_OK,TK_NotStart,SD 280,Metal fabrications  Approval,,72,0,56,0,0,0,56,0,0,0,,,,2012-01-25 08:00,2012-02-01 16:00,,2012-01-15 08:00,2012-01-22 16:00,2012-01-15 08:00,2012-01-22 16:00,2012-01-15 08:00,2012-01-22 16:00,,2012-01-25 08:00,2012-02-01 16:00,,PT_Normal,,,,,Dl8t1ljjSkuqjvqGF83YNg,uFsE4ciLtEKE7b23FaSXkA,,,N,0,0,,,2011-11-20 13:37,2011-11-20 14:03,admin,admin
239,85408,1180,11277,841,1,0,N,N,N,CP_Drtn,TT_Task,DT_FixedDUR2,RV_OK,TK_NotStart,SD 130,Sandwich panel submittal,,232,0,8,0,0,0,8,0,0,0,,,,2012-01-19 08:00,2012-01-19 16:00,,2011-12-17 08:00,2011-12-17 16:00,2011-12-17 08:00,2011-12-17 16:00,2011-12-17 08:00,2011-12-17 16:00,,2012-01-19 08:00,2012-01-19 16:00,,PT_Normal,,,,,IHynWkHIQ8elK/HHg0sWPQ,,,,N,0,0,,,2011-11-20 13:37,2011-11-20 14:02,admin,admin
240,85409,1180,11278,841,1,0,N,N,N,CP_Drtn,TT_Task,DT_FixedDUR2,RV_OK,TK_NotStart,SD 190,Sandwich panel  Approval,,232,0,8,0,0,0,8,0,0,0,,,,2012-02-05 08:00,2012-02-05 16:00,,2012-01-02 08:00,2012-01-02 16:00,2012-01-02 08:00,2012-01-02 16:00,2012-01-02 08:00,2012-01-02 16:00,,2012-02-05 08:00,2012-02-05 16:00,,PT_Normal,,,,,cgr0oEUyRx+zPYgz6+EWiQ,,,,N,0,0,,,2011-11-20 13:37,2011-11-20 14:03,admin,admin
241,85410,1180,11278,841,1,0,N,N,N,CP_Drtn,TT_Task,DT_FixedDUR2,RV_OK,TK_NotStart,SD 150,Plain concrete footings Approval,,0,0,48,0,0,0,48,0,0,0,,,,2011-12-19 08:00,2011-12-25 16:00,,2011-12-19 08:00,2011-12-25 16:00,2011-12-19 08:00,2011-12-25 16:00,2011-12-19 08:00,2011-12-25 16:00,,2011-12-19 08:00,2011-12-25 16:00,,PT_Normal,,,,,QrbV5a8QSx6StiNQN/Kzyg,uFsE4ciLtEKE7b23FaSXkA,,,Y,0,0,,,2011-11-20 13:37,2011-11-20 14:03,admin,admin
242,85411,1180,11277,841,1,0,N,N,N,CP_Drtn,TT_Task,DT_FixedDrtn,RV_OK,TK_NotStart,SD 100,Plain concrete footings submittal,,0,0,48,0,0,0,48,0,0,0,,,,2011-12-03 08:00,2011-12-08 16:00,,2011-12-03 08:00,2011-12-08 16:00,2011-12-03 08:00,2011-12-08 16:00,2011-12-03 08:00,2011-12-08 16:00,,2011-12-03 08:00,2011-12-08 16:00,,PT_Normal,,,,,55WIahSYSDmhxWaWNOaOXQ,i8FZXkCYckmh4dS0eUXPTA,,,Y,0,0,,,2011-11-20 13:37,2011-11-20 14:00,admin,admin
243,85412,1180,11277,841,1,0,N,N,N,CP_Drtn,TT_Task,DT_FixedDrtn,RV_OK,TK_NotStart,SD 120,R.C footings submittal,,0,0,48,0,0,0,48,0,0,0,,,,2011-12-11 08:00,2011-12-17 16:00,,2011-12-11 08:00,2011-12-17 16:00,2011-12-11 08:00,2011-12-17 16:00,2011-12-11 08:00,2011-12-17 16:00,,2011-12-11 08:00,2011-12-17 16:00,,PT_Normal,,,,,my3E60l/STeq5vOe3udxxg,i8FZXkCYckmh4dS0eUXPTA,,,Y,0,0,,,2011-11-20 13:37,2011-11-20 14:00,admin,admin
244,85413,1180,11278,841,1,0,N,N,N,CP_Drtn,TT_Task,DT_FixedDUR2,RV_OK,TK_NotStart,SD 180,R.C footings Approval,,0,0,48,0,0,0,48,0,0,0,,,,2011-12-27 08:00,2012-01-02 16:00,,2011-12-27 08:00,2012-01-02 16:00,2011-12-27 08:00,2012-01-02 16:00,2011-12-27 08:00,2012-01-02 16:00,,2011-12-27 08:00,2012-01-02 16:00,,PT_Normal,,,,,/4Ghb6pNSOCOOs2rASG8Gg,uFsE4ciLtEKE7b23FaSXkA,,,Y,0,0,,,2011-11-20 13:37,2011-11-20 14:03,admin,admin
245,85414,1180,11277,841,1,0,N,N,N,CP_Drtn,TT_Task,DT_FixedDrtn,RV_OK,TK_NotStart,SD 210,Windows submittal,,128,0,56,0,0,0,56,0,0,0,,,,2012-02-28 08:00,2012-03-06 16:00,,2012-02-09 08:00,2012-02-16 16:00,2012-02-09 08:00,2012-02-16 16:00,2012-02-09 08:00,2012-02-16 16:00,,2012-02-28 08:00,2012-03-06 16:00,,PT_Normal,,,,,ebccmhzPRSypVNUI8JarfQ,i8FZXkCYckmh4dS0eUXPTA,,,N,0,0,,,2011-11-20 13:37,2011-11-20 14:02,admin,admin
246,85415,1180,11278,841,1,0,N,N,N,CP_Drtn,TT_Task,DT_FixedDUR2,RV_OK,TK_NotStart,SD 270,Windows Approval,,128,0,56,0,0,0,56,0,0,0,,,,2012-03-15 08:00,2012-03-22 16:00,,2012-02-26 08:00,2012-03-04 16:00,2012-02-26 08:00,2012-03-04 16:00,2012-02-26 08:00,2012-03-04 16:00,,2012-03-15 08:00,2012-03-22 16:00,,PT_Normal,,,,,8sTxCTk8SQGO7qqohzUvEA,uFsE4ciLtEKE7b23FaSXkA,,,N,0,0,,,2011-11-20 13:37,2011-11-20 14:03,admin,admin
247,85416,1180,11277,841,1,0,N,N,N,CP_Drtn,TT_Task,DT_FixedDrtn,RV_OK,TK_NotStart,SD 110,Walk on ceiling submittal,,56,0,168,0,0,0,168,0,0,0,,,,2011-12-29 08:00,2012-01-22 16:00,,2011-12-21 08:00,2012-01-14 16:00,2011-12-21 08:00,2012-01-14 16:00,2011-12-21 08:00,2012-01-14 16:00,,2011-12-29 08:00,2012-01-22 16:00,,PT_Normal,,,,,8tCwHCDaR1q1grMJlh60hg,yuPzp0G0gUqazOYqnD9zNw,,,N,0,0,,,2011-11-20 13:37,2011-11-20 14:02,admin,admin
248,85417,1180,11278,841,1,0,N,N,N,CP_Drtn,TT_Task,DT_FixedDrtn,RV_OK,TK_NotStart,SD 170,Walk on ceiling Approval,,56,0,168,0,0,0,168,0,0,0,,,,2012-01-15 08:00,2012-02-07 16:00,,2012-01-07 08:00,2012-01-30 16:00,2012-01-07 08:00,2012-01-30 16:00,2012-01-07 08:00,2012-01-30 16:00,,2012-01-15 08:00,2012-02-07 16:00,,PT_Normal,,,,,07COrgynRmW7ML0sT3lBrA,Hy6J4Rw8HEGeTclBys0xTg,,,N,0,0,,,2011-11-20 13:37,2011-11-20 14:03,admin,admin
249,85418,1180,11277,841,0,0,N,N,N,CP_Drtn,TT_FinMile,DT_FixedDrtn,RV_OK,TK_NotStart,SD 300,As built submittal,,0,0,0,0,0,0,0,0,0,0,,,,2012-05-08 16:00,2012-05-08 16:00,,2012-05-08 16:00,2012-05-08 16:00,2012-05-08 16:00,2012-05-08 16:00,2012-05-08 16:00,2012-05-08 16:00,,2012-05-08 16:00,2012-05-08 16:00,,PT_Normal,,,,,bNtD/A5dRNqJCV76VZ/Bbw,,,,Y,0,0,,,2011-11-20 13:37,2011-11-20 14:02,admin,admin
250,85419,1180,11277,841,1,0,N,N,N,CP_Drtn,TT_Task,DT_FixedDrtn,RV_OK,TK_NotStart,SD 230,Louvers submittal,,72,0,56,0,0,0,56,0,0,0,,,,2012-01-09 08:00,2012-01-16 16:00,,2011-12-29 08:00,2012-01-05 16:00,2011-12-29 08:00,2012-01-05 16:00,2011-12-29 08:00,2012-01-05 16:00,,2012-01-09 08:00,2012-01-16 16:00,,PT_Normal,,,,,Ul24RquhShqGntDsK0X7JA,i8FZXkCYckmh4dS0eUXPTA,,,N,0,0,,,2011-11-20 13:37,2011-11-20 14:02,admin,admin
251,85420,1180,11278,841,1,0,N,N,N,CP_Drtn,TT_Task,DT_FixedDUR2,RV_OK,TK_NotStart,SD 290,Louvers  Approval,,72,0,56,0,0,0,56,0,0,0,,,,2012-01-25 08:00,2012-02-01 16:00,,2012-01-15 08:00,2012-01-22 16:00,2012-01-15 08:00,2012-01-22 16:00,2012-01-15 08:00,2012-01-22 16:00,,2012-01-25 08:00,2012-02-01 16:00,,PT_Normal,,,,,Ek2kbf5HT+CVHvaAMiotuw,uFsE4ciLtEKE7b23FaSXkA,,,N,0,0,,,2011-11-20 13:37,2011-11-20 14:03,admin,admin
252,85421,1180,11277,841,1,0,N,N,N,CP_Drtn,TT_Task,DT_FixedDrtn,RV_OK,TK_NotStart,SD 310,Steel structure-juice building submittal,,432,0,56,0,0,0,56,0,0,0,,,,2012-01-29 08:00,2012-02-05 16:00,,2011-11-26 08:00,2011-12-04 16:00,2011-11-26 08:00,2011-12-04 16:00,2011-11-26 08:00,2011-12-04 16:00,,2012-01-29 08:00,2012-02-05 16:00,,PT_Normal,,,,,PEbBtib+6EKJu3RPHLKscA,TOh5upr1QNO6jCvYlbo7LA,,,N,0,0,,,2011-11-20 13:37,2011-11-20 14:02,admin,admin
253,85422,1180,11278,841,1,0,N,N,N,CP_Drtn,TT_Task,DT_FixedDUR2,RV_OK,TK_NotStart,SD 320,Steel structure-juice building  Approval,,432,416,56,0,0,0,56,0,0,0,,,,2012-02-14 08:00,2012-02-21 16:00,,2011-12-13 08:00,2011-12-20 16:00,2011-12-13 08:00,2011-12-20 16:00,2011-12-13 08:00,2011-12-20 16:00,,2012-02-14 08:00,2012-02-21 16:00,,PT_Normal,,,,,TEKXorHXBUOVjwWzRddemg,sBzViv+CSU+F6N182zzXIQ,,,N,0,0,,,2011-11-20 13:37,2011-11-20 14:03,admin,admin
254,85423,1180,11277,841,1,0,N,N,N,CP_Drtn,TT_Task,DT_FixedDrtn,RV_OK,TK_NotStart,SD 330,R.C footings-juice building submittal,,128,0,48,0,0,0,48,0,0,0,,,,2011-12-29 08:00,2012-01-04 16:00,,2011-12-11 08:00,2011-12-17 16:00,2011-12-11 08:00,2011-12-17 16:00,2011-12-11 08:00,2011-12-17 16:00,,2011-12-29 08:00,2012-01-04 16:00,,PT_Normal,,,,,6wP5zINxZkG3DsmeCao//A,my3E60l/STeq5vOe3udxxg,,,N,0,0,,,2011-11-20 13:37,2011-11-20 14:00,admin,admin
255,85424,1180,11278,841,1,0,N,N,N,CP_Drtn,TT_Task,DT_FixedDUR2,RV_OK,TK_NotStart,SD 340,R.C footings-juice building Approval,,128,112,48,0,0,0,48,0,0,0,,,,2012-01-15 08:00,2012-01-21 16:00,,2011-12-27 08:00,2012-01-02 16:00,2011-12-27 08:00,2012-01-02 16:00,2011-12-27 08:00,2012-01-02 16:00,,2012-01-15 08:00,2012-01-21 16:00,,PT_Normal,,,,,IALEUGPNoUagbY317H++1A,/4Ghb6pNSOCOOs2rASG8Gg,,,N,0,0,,,2011-11-20 13:37,2011-11-20 14:03,admin,admin
