,task_id,proj_id,wbs_id,clndr_id,est_wt,phys_complete_pct,rev_fdbk_flag,lock_plan_flag,auto_compute_act_flag,complete_pct_type,task_type,duration_type,review_type,status_code,task_code,task_name,rsrc_id,total_float_hr_cnt,free_float_hr_cnt,remain_drtn_hr_cnt,act_work_qty,remain_work_qty,target_work_qty,target_drtn_hr_cnt,target_equip_qty,act_equip_qty,remain_equip_qty,cstr_date,act_start_date,act_end_date,late_start_date,late_end_date,expect_end_date,early_start_date,early_end_date,restart_date,reend_date,target_start_date,target_end_date,review_end_date,rem_late_start_date,rem_late_end_date,cstr_type,priority_type,suspend_date,resume_date,float_path,float_path_order,guid,tmpl_guid,cstr_date2,cstr_type2,driving_path_flag,act_this_per_work_qty,act_this_per_equip_qty,external_early_start_date,external_late_end_date,create_date,update_date,create_user,update_user
0,83971,1076,10893,841,0,0,N,N,N,CP_Drtn,TT_Mile,DT_FixedDrtn,RV_OK,TK_NotStart,DD170,Guard bollard delivery on site,,104,0,0,0,0,0,0,0,0,0,,,,2012-02-23 08:00,2012-02-23 08:00,,2012-02-08 08:00,2012-02-08 08:00,2012-02-08 08:00,2012-02-08 08:00,2012-02-08 08:00,2012-02-08 08:00,,2012-02-23 08:00,2012-02-23 08:00,,PT_Normal,,,,,wFzTga8OG02nJVxTHBonDA,,,,N,0,0,,,2011-11-01 20:34,2011-11-01 21:11,admin,admin
1,83972,1076,10893,841,0,0,N,N,N,CP_Drtn,TT_Mile,DT_FixedDrtn,RV_OK,TK_NotStart,DD200,Windows delivery on site,,80,0,0,0,0,0,0,0,0,0,,,,2012-03-21 08:00,2012-03-21 08:00,,2012-03-10 08:00,2012-03-10 08:00,2012-03-10 08:00,2012-03-10 08:00,2012-03-10 08:00,2012-03-10 08:00,,2012-03-21 08:00,2012-03-21 08:00,,PT_Normal,,,,,PbsJW2+g+0OQquXIEaJSaA,yG244tJxSSyUfgdrznr8kA,,,N,0,0,,,2011-11-01 20:34,2011-11-01 21:11,admin,admin
2,83973,1076,10893,841,0,0,N,N,N,CP_Drtn,TT_Mile,DT_FixedDrtn,RV_OK,TK_NotStart,DD210,Doors delivery on site,,24,0,0,0,0,0,0,0,0,0,,,,2012-02-28 08:00,2012-02-28 08:00,,2012-02-25 08:00,2012-02-25 08:00,2012-02-25 08:00,2012-02-25 08:00,2012-02-25 08:00,2012-02-25 08:00,,2012-02-28 08:00,2012-02-28 08:00,,PT_Normal,,,,,3+o2LD8kc0OKzIcXNdDWdA,LwxOL0OA70ir27sTopBkvQ,,,N,0,0,,,2011-11-01 20:34,2011-11-01 21:11,admin,admin
3,83974,1076,10893,841,0,0,N,N,N,CP_Drtn,TT_Mile,DT_FixedDrtn,RV_OK,TK_NotStart,DD140,Polyurethane delivery on site,,0,0,0,0,0,0,0,0,0,0,,,,2012-03-15 08:00,2012-03-15 08:00,,2012-03-15 08:00,2012-03-15 08:00,2012-03-15 08:00,2012-03-15 08:00,2012-03-15 08:00,2012-03-15 08:00,,2012-03-15 08:00,2012-03-15 08:00,,PT_Normal,,,,,caW3HAiQsECcvlY5RQI3Mg,,,,Y,0,0,,,2011-11-01 20:34,2011-11-01 21:11,admin,admin
4,83975,1076,10893,841,0,0,N,N,N,CP_Drtn,TT_Mile,DT_FixedDrtn,RV_OK,TK_NotStart,DD120,Delivery of walk-on-ceiling laminated with electrostatic galvanized steel,,8,0,0,0,0,0,0,0,0,0,,,,2012-02-18 16:00,2012-02-18 16:00,,2012-02-18 08:00,2012-02-18 08:00,2012-02-18 08:00,2012-02-18 08:00,2012-02-18 08:00,2012-02-18 08:00,,2012-02-18 16:00,2012-02-18 16:00,,PT_Normal,,,,,gd1NKwWYg0eMnVrYl5KcqA,,,,N,0,0,,,2011-11-01 20:34,2011-11-01 21:11,admin,admin
5,83976,1076,10893,841,1,0,N,N,N,CP_Drtn,TT_Task,DT_FixedDrtn,RV_OK,TK_NotStart,DD110,Steel structure delivery on site,,104,0,96,0,0,0,96,0,0,0,,,,2011-12-31 08:00,2012-01-12 16:00,,2011-12-15 08:00,2011-12-28 16:00,2011-12-15 08:00,2011-12-28 16:00,2011-12-15 08:00,2011-12-28 16:00,,2011-12-31 08:00,2012-01-12 16:00,,PT_Normal,,,,,AjM48ViEG0iQo+EJeOHfuA,,,,N,0,0,,,2011-11-01 20:34,2011-11-01 21:11,admin,admin
6,83977,1076,10893,841,0,0,N,N,N,CP_Drtn,TT_Mile,DT_FixedDrtn,RV_OK,TK_NotStart,DD130,Metal works delivery on site,,176,104,0,0,0,0,0,0,0,0,,,,2012-03-06 08:00,2012-03-06 08:00,,2012-02-09 08:00,2012-02-09 08:00,2012-02-09 08:00,2012-02-09 08:00,2012-02-09 08:00,2012-02-09 08:00,,2012-03-06 08:00,2012-03-06 08:00,,PT_Normal,,,,,+FL1TVtltkeHK1oZCTvePQ,,,,N,0,0,,,2011-11-01 20:34,2011-11-01 21:11,admin,admin
7,83978,1076,10893,841,0,0,N,N,N,CP_Drtn,TT_Mile,DT_FixedDrtn,RV_OK,TK_NotStart,DD100,Sandwich panel delivery on site,,184,0,0,0,0,0,0,0,0,0,,,,2012-02-04 08:00,2012-02-04 08:00,,2012-01-08 08:00,2012-01-08 08:00,2012-01-08 08:00,2012-01-08 08:00,2012-01-08 08:00,2012-01-08 08:00,,2012-02-04 08:00,2012-02-04 08:00,,PT_Normal,,,,,PRIHsLVXoUG7MlTJsa3LuA,,,,N,0,0,,,2011-11-01 20:34,2011-11-01 21:11,admin,admin
8,83979,1076,10893,841,0,0,N,N,N,CP_Drtn,TT_Mile,DT_FixedDrtn,RV_OK,TK_NotStart,DD150,Steel stairs Delivery on site,,256,0,0,0,0,0,0,0,0,0,,,,2012-03-21 08:00,2012-03-21 08:00,,2012-02-13 08:00,2012-02-13 08:00,2012-02-13 08:00,2012-02-13 08:00,2012-02-13 08:00,2012-02-13 08:00,,2012-03-21 08:00,2012-03-21 08:00,,PT_Normal,,,,,MUrT3+6/BkiFnhoFa8mEKQ,,,,N,0,0,,,2011-11-01 20:34,2011-11-01 21:11,admin,admin
9,83980,1076,10893,841,0,0,N,N,N,CP_Drtn,TT_Mile,DT_FixedDrtn,RV_OK,TK_NotStart,DD160,Roll up shutter doors delivery on site,,32,0,0,0,0,0,0,0,0,0,,,,2012-03-12 08:00,2012-03-12 08:00,,2012-03-07 08:00,2012-03-07 08:00,2012-03-07 08:00,2012-03-07 08:00,2012-03-07 08:00,2012-03-07 08:00,,2012-03-12 08:00,2012-03-12 08:00,,PT_Normal,,,,,M4u+lqLYHk+Q6TLoo82VGA,,,,N,0,0,,,2011-11-01 20:34,2011-11-01 21:11,admin,admin
10,83981,1076,10894,841,0,0,N,N,N,CP_Drtn,TT_Mile,DT_FixedDrtn,RV_OK,TK_NotStart,PO 150,Guard bollard purchase order,,104,0,0,0,0,0,0,0,0,0,,,,2011-12-15 08:00,2011-12-15 08:00,,2011-11-30 08:00,2011-11-30 08:00,2011-11-30 08:00,2011-11-30 08:00,2011-11-30 08:00,2011-11-30 08:00,,2011-12-15 08:00,2011-12-15 08:00,,PT_Normal,,,,,3Hoc6BmEBEaRJvMHUYHCkA,,,,N,0,0,,,2011-11-01 20:34,2011-11-01 21:11,admin,admin
11,83982,1076,10894,841,0,0,N,N,N,CP_Drtn,TT_Mile,DT_FixedDrtn,RV_OK,TK_NotStart,PO 180,Windows purchase order,,80,0,0,0,0,0,0,0,0,0,,,,2012-02-15 08:00,2012-02-15 08:00,,2012-02-04 08:00,2012-02-04 08:00,2012-02-04 08:00,2012-02-04 08:00,2012-02-04 08:00,2012-02-04 08:00,,2012-02-15 08:00,2012-02-15 08:00,,PT_Normal,,,,,xyI8jIIbU0KtL0NwzQy7Dg,+NlCFveHQfO9cPW1Iic19w,,,N,0,0,,,2011-11-01 20:34,2011-11-01 21:11,admin,admin
12,83983,1076,10894,841,0,0,N,N,N,CP_Drtn,TT_Mile,DT_FixedDrtn,RV_OK,TK_NotStart,PO 190,Doors purchase orders,,24,0,0,0,0,0,0,0,0,0,,,,2011-12-20 08:00,2011-12-20 08:00,,2011-12-17 08:00,2011-12-17 08:00,2011-12-17 08:00,2011-12-17 08:00,2011-12-17 08:00,2011-12-17 08:00,,2011-12-20 08:00,2011-12-20 08:00,,PT_Normal,,,,,8ikkfl2mzkCCyCZ9N53rPg,+NlCFveHQfO9cPW1Iic19w,,,N,0,0,,,2011-11-01 20:34,2011-11-01 21:11,admin,admin
13,83984,1076,10894,841,0,0,N,N,N,CP_Drtn,TT_Mile,DT_FixedDrtn,RV_OK,TK_NotStart,PO 100,Polyurethane purchase order,,0,0,0,0,0,0,0,0,0,0,,,,2011-12-01 08:00,2011-12-01 08:00,,2011-12-01 08:00,2011-12-01 08:00,2011-12-01 08:00,2011-12-01 08:00,2011-12-01 08:00,2011-12-01 08:00,,2011-12-01 08:00,2011-12-01 08:00,,PT_Normal,,,,,85/fLQYH4Uin9E9qTTmQsg,,,,Y,0,0,,,2011-11-01 20:34,2011-11-01 21:11,admin,admin
14,83985,1076,10894,841,0,0,N,N,N,CP_Drtn,TT_Mile,DT_FixedDrtn,RV_OK,TK_NotStart,PO 130,Walk on ceiling purchase order,,8,0,0,0,0,0,0,0,0,0,,,,2011-11-21 08:00,2011-11-21 08:00,,2011-11-20 08:00,2011-11-20 08:00,2011-11-20 08:00,2011-11-20 08:00,2011-11-20 08:00,2011-11-20 08:00,,2011-11-21 08:00,2011-11-21 08:00,,PT_Normal,,,,,g8EVBXxAZUqumOlvfBpbqw,,,,N,0,0,,,2011-11-01 20:34,2011-11-01 21:11,admin,admin
15,83986,1076,10894,841,0,0,N,N,N,CP_Drtn,TT_Mile,DT_FixedDrtn,RV_OK,TK_NotStart,PO 120,Steel structure purchase order,,104,0,0,0,0,0,0,0,0,0,,,,2011-10-10 08:00,2011-10-10 08:00,,2011-09-25 08:00,2011-09-25 08:00,2011-09-25 08:00,2011-09-25 08:00,2011-09-25 08:00,2011-09-25 08:00,,2011-10-10 08:00,2011-10-10 08:00,,PT_Normal,,,,,71e/d/bKrEiOifelqK6sfw,,,,N,0,0,,,2011-11-01 20:34,2011-11-01 21:11,admin,admin
16,83987,1076,10894,841,0,0,N,N,N,CP_Drtn,TT_Mile,DT_FixedDrtn,RV_OK,TK_NotStart,PO 140,Metal works purchase order,,176,0,0,0,0,0,0,0,0,0,,,,2011-12-27 08:00,2011-12-27 08:00,,2011-12-01 08:00,2011-12-01 08:00,2011-12-01 08:00,2011-12-01 08:00,2011-12-01 08:00,2011-12-01 08:00,,2011-12-27 08:00,2011-12-27 08:00,,PT_Normal,,,,,cZ2Fnv+OP0yXTHHOy1haqQ,,,,N,0,0,,,2011-11-01 20:34,2011-11-01 21:11,admin,admin
17,83988,1076,10894,841,0,0,N,N,N,CP_Drtn,TT_Mile,DT_FixedDrtn,RV_OK,TK_NotStart,PO 110,Sandwich panel purchase order,,184,0,0,0,0,0,0,0,0,0,,,,2011-12-13 08:00,2011-12-13 08:00,,2011-11-15 08:00,2011-11-15 08:00,2011-11-15 08:00,2011-11-15 08:00,2011-11-15 08:00,2011-11-15 08:00,,2011-12-13 08:00,2011-12-13 08:00,,PT_Normal,,,,,yLRwmOHJkkCCU0IeSXZjbA,,,,N,0,0,,,2011-11-01 20:34,2011-11-01 21:11,admin,admin
18,83989,1076,10896,841,1,0,N,N,N,CP_Drtn,TT_Task,DT_FixedDUR2,RV_OK,TK_NotStart,MT-1000,Material submittal,,184,0,24,0,0,0,24,0,0,0,,,,2011-10-24 08:00,2011-10-26 16:00,,2011-09-27 08:00,2011-09-29 16:00,2011-09-27 08:00,2011-09-29 16:00,2011-09-27 08:00,2011-09-29 16:00,,2011-10-24 08:00,2011-10-26 16:00,,PT_Normal,,,,,c8X0VqUjRUaNBRb8hFJ3eA,Muzq1Pe6jUCrvWeDsHDDbg,,,N,0,0,,,2011-11-01 20:34,2011-11-01 21:11,admin,admin
19,83990,1076,10896,841,1,0,N,N,N,CP_Drtn,TT_Task,DT_FixedDUR2,RV_OK,TK_NotStart,MT-1090,Material approval,,184,0,24,0,0,0,24,0,0,0,,,,2011-12-04 08:00,2011-12-06 16:00,,2011-10-30 08:00,2011-11-01 16:00,2011-10-30 08:00,2011-11-01 16:00,2011-10-30 08:00,2011-11-01 16:00,,2011-12-04 08:00,2011-12-06 16:00,,PT_Normal,,,,,L+VJAA2JUUCZMFopWW4rjQ,iIx63neXRUye+q/9yz5B8w,,,N,0,0,,,2011-11-01 20:34,2011-11-01 21:11,admin,admin
20,83991,1076,10897,841,1,0,N,N,N,CP_Drtn,TT_Task,DT_FixedDUR2,RV_OK,TK_NotStart,MT-1040,Material submittal,,24,0,16,0,0,0,16,0,0,0,,,,2011-10-10 08:00,2011-10-11 16:00,,2011-10-06 08:00,2011-10-08 16:00,2011-10-06 08:00,2011-10-08 16:00,2011-10-06 08:00,2011-10-08 16:00,,2011-10-10 08:00,2011-10-11 16:00,,PT_Normal,,,,,USg1I4PLeEm+1lHbRvFq5A,Muzq1Pe6jUCrvWeDsHDDbg,,,N,0,0,,,2011-11-01 20:34,2011-11-01 21:11,admin,admin
21,83992,1076,10897,841,1,0,N,N,N,CP_Drtn,TT_Task,DT_FixedDUR2,RV_OK,TK_NotStart,MT-1150,Material approval,,24,0,16,0,0,0,16,0,0,0,,,,2011-11-19 08:00,2011-11-20 16:00,,2011-11-15 08:00,2011-11-16 16:00,2011-11-15 08:00,2011-11-16 16:00,2011-11-15 08:00,2011-11-16 16:00,,2011-11-19 08:00,2011-11-20 16:00,,PT_Normal,,,,,qSiN/t32G0uR4F8s4idsIg,iIx63neXRUye+q/9yz5B8w,,,N,0,0,,,2011-11-01 20:34,2011-11-01 21:11,admin,admin
22,83993,1076,10898,841,1,0,N,N,N,CP_Drtn,TT_Task,DT_FixedDUR2,RV_OK,TK_NotStart,MT-1110,Material submittal,,376,0,16,0,0,0,16,0,0,0,,,,2012-01-28 08:00,2012-01-29 16:00,,2011-12-04 08:00,2011-12-05 16:00,2011-12-04 08:00,2011-12-05 16:00,2011-12-04 08:00,2011-12-05 16:00,,2012-01-28 08:00,2012-01-29 16:00,,PT_Normal,,,,,3piL4OMXkESaq3a2MU59jg,Muzq1Pe6jUCrvWeDsHDDbg,,,N,0,0,,,2011-11-01 20:34,2011-11-01 21:11,admin,admin
23,83994,1076,10898,841,1,0,N,N,N,CP_Drtn,TT_Task,DT_FixedDUR2,RV_OK,TK_NotStart,MT-1210,Material approval,,376,160,16,0,0,0,16,0,0,0,,,,2012-02-29 08:00,2012-03-01 16:00,,2012-01-05 08:00,2012-01-07 16:00,2012-01-05 08:00,2012-01-07 16:00,2012-01-05 08:00,2012-01-07 16:00,,2012-02-29 08:00,2012-03-01 16:00,,PT_Normal,,,,,1SXN5J5lTkqyGLfohpJfWA,iIx63neXRUye+q/9yz5B8w,,,N,0,0,,,2011-11-01 20:34,2011-11-01 21:11,admin,admin
24,83995,1076,10899,841,1,0,N,N,N,CP_Drtn,TT_Task,DT_FixedDUR2,RV_OK,TK_NotStart,MT-1080,Material submittal,,504,0,16,0,0,0,16,0,0,0,,,,2012-02-15 08:00,2012-02-16 16:00,,2011-12-04 08:00,2011-12-05 16:00,2011-12-04 08:00,2011-12-05 16:00,2011-12-04 08:00,2011-12-05 16:00,,2012-02-15 08:00,2012-02-16 16:00,,PT_Normal,,,,,sUbdInRczkCbXlmlZoE/bQ,662G0UBCtUiaPz4+4FsUvA,,,N,0,0,,,2011-11-01 20:34,2011-11-01 21:11,admin,admin
25,83996,1076,10899,841,1,0,N,N,N,CP_Drtn,TT_Task,DT_FixedDUR2,RV_OK,TK_NotStart,MT-1190,Material approval,,504,392,16,0,0,0,16,0,0,0,,,,2012-03-19 08:00,2012-03-20 16:00,,2012-01-05 08:00,2012-01-07 16:00,2012-01-05 08:00,2012-01-07 16:00,2012-01-05 08:00,2012-01-07 16:00,,2012-03-19 08:00,2012-03-20 16:00,,PT_Normal,,,,,A61g/h8Nukmo/sfATnzu8Q,0V6RQ5FwLU6AhMOYYTMJyA,,,N,0,0,,,2011-11-01 20:34,2011-11-01 21:11,admin,admin
26,83997,1076,10900,841,1,0,N,N,N,CP_Drtn,TT_Task,DT_FixedDUR2,RV_OK,TK_NotStart,MT-1170,Material approval,,24,0,16,0,0,0,16,0,0,0,,,,2011-11-19 08:00,2011-11-20 16:00,,2011-11-15 08:00,2011-11-16 16:00,2011-11-15 08:00,2011-11-16 16:00,2011-11-15 08:00,2011-11-16 16:00,,2011-11-19 08:00,2011-11-20 16:00,,PT_Normal,,,,,eDvu1MN+80mr6THru7GwOQ,iIx63neXRUye+q/9yz5B8w,,,N,0,0,,,2011-11-01 20:34,2011-11-01 21:11,admin,admin
27,83998,1076,10900,841,1,0,N,N,N,CP_Drtn,TT_Task,DT_FixedDUR2,RV_OK,TK_NotStart,MT-1060,Material submittal,,24,0,16,0,0,0,16,0,0,0,,,,2011-10-10 08:00,2011-10-11 16:00,,2011-10-06 08:00,2011-10-08 16:00,2011-10-06 08:00,2011-10-08 16:00,2011-10-06 08:00,2011-10-08 16:00,,2011-10-10 08:00,2011-10-11 16:00,,PT_Normal,,,,,YvBUBxgl9kiv47R93tj+pQ,Muzq1Pe6jUCrvWeDsHDDbg,,,N,0,0,,,2011-11-01 20:34,2011-11-01 21:11,admin,admin
28,83999,1076,10901,841,1,0,N,N,N,CP_Drtn,TT_Task,DT_FixedDUR2,RV_OK,TK_NotStart,MT-1070,Material submittal,,24,0,16,0,0,0,16,0,0,0,,,,2011-10-10 08:00,2011-10-11 16:00,,2011-10-06 08:00,2011-10-08 16:00,2011-10-06 08:00,2011-10-08 16:00,2011-10-06 08:00,2011-10-08 16:00,,2011-10-10 08:00,2011-10-11 16:00,,PT_Normal,,,,,CBQr7+eggUiUkliepmSTbQ,Muzq1Pe6jUCrvWeDsHDDbg,,,N,0,0,,,2011-11-01 20:34,2011-11-01 21:11,admin,admin
29,84000,1076,10901,841,1,0,N,N,N,CP_Drtn,TT_Task,DT_FixedDUR2,RV_OK,TK_NotStart,MT-1180,Material approval,,24,0,16,0,0,0,16,0,0,0,,,,2011-11-19 08:00,2011-11-20 16:00,,2011-11-15 08:00,2011-11-16 16:00,2011-11-15 08:00,2011-11-16 16:00,2011-11-15 08:00,2011-11-16 16:00,,2011-11-19 08:00,2011-11-20 16:00,,PT_Normal,,,,,tho3JMJJr0GCyS4ot14A+w,iIx63neXRUye+q/9yz5B8w,,,N,0,0,,,2011-11-01 20:34,2011-11-01 21:11,admin,admin
30,84001,1076,10902,841,1,0,N,N,N,CP_Drtn,TT_Task,DT_FixedDUR2,RV_OK,TK_NotStart,MT-1100,Material submittal,,328,0,16,0,0,0,16,0,0,0,,,,2012-01-21 08:00,2012-01-22 16:00,,2011-12-04 08:00,2011-12-05 16:00,2011-12-04 08:00,2011-12-05 16:00,2011-12-04 08:00,2011-12-05 16:00,,2012-01-21 08:00,2012-01-22 16:00,,PT_Normal,,,,,s1hXd4icp0q1dyljfaqAaw,Muzq1Pe6jUCrvWeDsHDDbg,,,N,0,0,,,2011-11-01 20:34,2011-11-01 21:11,admin,admin
31,84002,1076,10902,841,1,0,N,N,N,CP_Drtn,TT_Task,DT_FixedDUR2,RV_OK,TK_NotStart,MT-1200,Material approval,,328,120,16,0,0,0,16,0,0,0,,,,2012-02-22 08:00,2012-02-23 16:00,,2012-01-05 08:00,2012-01-07 16:00,2012-01-05 08:00,2012-01-07 16:00,2012-01-05 08:00,2012-01-07 16:00,,2012-02-22 08:00,2012-02-23 16:00,,PT_Normal,,,,,hgQ4S5QtzU+zFSirCzCJYA,iIx63neXRUye+q/9yz5B8w,,,N,0,0,,,2011-11-01 20:34,2011-11-01 21:11,admin,admin
32,84003,1076,10903,841,1,0,N,N,N,CP_Drtn,TT_Task,DT_FixedDUR2,RV_OK,TK_NotStart,MT-1020,Material submittal,,8,0,56,0,0,0,56,0,0,0,,,,2011-10-02 08:00,2011-10-09 16:00,,2011-10-01 08:00,2011-10-08 16:00,2011-10-01 08:00,2011-10-08 16:00,2011-10-01 08:00,2011-10-08 16:00,,2011-10-02 08:00,2011-10-09 16:00,,PT_Normal,,,,,jOsi5cNZ8EGWy/UuMSAMLw,Muzq1Pe6jUCrvWeDsHDDbg,,,N,0,0,,,2011-11-01 20:34,2011-11-01 21:11,admin,admin
33,84004,1076,10903,841,1,0,N,N,N,CP_Drtn,TT_Task,DT_FixedDUR2,RV_OK,TK_NotStart,MT-1130,Material approval,,8,0,56,0,0,0,56,0,0,0,,,,2011-11-03 08:00,2011-11-17 16:00,,2011-11-02 08:00,2011-11-16 16:00,2011-11-02 08:00,2011-11-16 16:00,2011-11-02 08:00,2011-11-16 16:00,,2011-11-03 08:00,2011-11-17 16:00,,PT_Normal,,,,,rI3Pz4HYokCNB1YT0gewgg,iIx63neXRUye+q/9yz5B8w,,,N,0,0,,,2011-11-01 20:34,2011-11-01 21:11,admin,admin
34,84005,1076,10904,841,1,0,N,N,N,CP_Drtn,TT_Task,DT_FixedDUR2,RV_OK,TK_NotStart,MT-1030,Material submittal,,664,0,16,0,0,0,16,0,0,0,,,,2012-01-15 08:00,2012-01-16 16:00,,2011-10-02 08:00,2011-10-03 16:00,2011-10-02 08:00,2011-10-03 16:00,2011-10-02 08:00,2011-10-03 16:00,,2012-01-15 08:00,2012-01-16 16:00,,PT_Normal,,,,,09dQvDg9fk6qd2ioD7/8KA,Muzq1Pe6jUCrvWeDsHDDbg,,,N,0,0,,,2011-11-01 20:34,2011-11-01 21:11,admin,admin
35,84006,1076,10904,841,1,0,N,N,N,CP_Drtn,TT_Task,DT_FixedDUR2,RV_OK,TK_NotStart,MT-1140,Material approval,,664,496,16,0,0,0,16,0,0,0,,,,2012-02-16 08:00,2012-02-18 16:00,,2011-11-03 08:00,2011-11-12 16:00,2011-11-03 08:00,2011-11-12 16:00,2011-11-03 08:00,2011-11-12 16:00,,2012-02-16 08:00,2012-02-18 16:00,,PT_Normal,,,,,8+V2DIZ3NU6GKjOJqKCdpg,iIx63neXRUye+q/9yz5B8w,,,N,0,0,,,2011-11-01 20:34,2011-11-01 21:11,admin,admin
36,84007,1076,10905,841,1,0,N,N,N,CP_Drtn,TT_Task,DT_FixedDUR2,RV_OK,TK_NotStart,MT-1050,Material submittal,,80,0,56,0,0,0,56,0,0,0,,,,2011-12-12 08:00,2011-12-19 16:00,,2011-11-30 08:00,2011-12-07 16:00,2011-11-30 08:00,2011-12-07 16:00,2011-11-30 08:00,2011-12-07 16:00,,2011-12-12 08:00,2011-12-19 16:00,,PT_Normal,,,,,dCFuNi0tTUSPdSXqUBPV+w,Muzq1Pe6jUCrvWeDsHDDbg,,,N,0,0,,,2011-11-01 20:34,2011-11-01 21:11,admin,admin
37,84008,1076,10905,841,1,0,N,N,N,CP_Drtn,TT_Task,DT_FixedDUR2,RV_OK,TK_NotStart,MT-1160,Material approval,,80,0,56,0,0,0,56,0,0,0,,,,2012-01-14 08:00,2012-01-21 16:00,,2012-01-02 08:00,2012-01-09 16:00,2012-01-02 08:00,2012-01-09 16:00,2012-01-02 08:00,2012-01-09 16:00,,2012-01-14 08:00,2012-01-21 16:00,,PT_Normal,,,,,c2ID6mJeUUGpLtZ4JVZgDg,iIx63neXRUye+q/9yz5B8w,,,N,0,0,,,2011-11-01 20:34,2011-11-01 21:11,admin,admin
38,84009,1076,10906,841,1,0,N,N,N,CP_Drtn,TT_Task,DT_FixedDUR2,RV_OK,TK_NotStart,MT-1010,Material submittal,,128,0,16,0,0,0,16,0,0,0,,,,2011-10-10 08:00,2011-10-11 16:00,,2011-09-21 08:00,2011-09-22 16:00,2011-09-21 08:00,2011-09-22 16:00,2011-09-21 08:00,2011-09-22 16:00,,2011-10-10 08:00,2011-10-11 16:00,,PT_Normal,,,,,lF6f/SsEhUa6c1tPqoJmwQ,TWgA69LaOUib4zdo+47MRQ,,,N,0,0,,,2011-11-01 20:34,2011-11-01 21:11,admin,admin
39,84010,1076,10906,841,1,0,N,N,N,CP_Drtn,TT_Task,DT_FixedDUR2,RV_OK,TK_NotStart,MT-1120,Material approval,,128,104,16,0,0,0,16,0,0,0,,,,2011-11-19 08:00,2011-11-20 16:00,,2011-10-24 08:00,2011-10-25 16:00,2011-10-24 08:00,2011-10-25 16:00,2011-10-24 08:00,2011-10-25 16:00,,2011-11-19 08:00,2011-11-20 16:00,,PT_Normal,,,,,Bc+Hk8SHykGp79aXZiDBlw,JVYuWWbYFkKKuGYkgoxYHw,,,N,0,0,,,2011-11-01 20:34,2011-11-01 21:11,admin,admin
40,84011,1076,10907,841,1,0,N,N,N,CP_Drtn,TT_Task,DT_FixedDUR2,RV_OK,TK_NotStart,MT-1240,Material submittal,,256,0,24,0,0,0,24,0,0,0,,,,2012-02-02 08:00,2012-02-05 16:00,,2011-12-27 08:00,2011-12-29 16:00,2011-12-27 08:00,2011-12-29 16:00,2011-12-27 08:00,2011-12-29 16:00,,2012-02-02 08:00,2012-02-05 16:00,,PT_Normal,,,,,KLhAF43qk02Kn1whMnT02Q,SOGwtvnb7k6IwMshJeUSKw,,,N,0,0,,,2011-11-01 20:34,2011-11-01 21:11,admin,admin
41,84012,1076,10907,841,1,0,N,N,N,CP_Drtn,TT_Task,DT_FixedDUR2,RV_OK,TK_NotStart,MT-1250,Material approval,,256,0,24,0,0,0,24,0,0,0,,,,2012-03-06 08:00,2012-03-08 16:00,,2012-01-29 08:00,2012-01-31 16:00,2012-01-29 08:00,2012-01-31 16:00,2012-01-29 08:00,2012-01-31 16:00,,2012-03-06 08:00,2012-03-08 16:00,,PT_Normal,,,,,56KWiJPfLUqip94od354CQ,4NJh3d8v/E+EbuJyRjBzWg,,,N,0,0,,,2011-11-01 20:34,2011-11-01 21:11,admin,admin
42,84013,1076,10908,841,1,0,N,N,N,CP_Drtn,TT_Task,DT_FixedDUR2,RV_OK,TK_NotStart,MT-1360,Material submittal,,16,0,24,0,0,0,24,0,0,0,,,,2011-12-29 08:00,2012-01-01 16:00,,2011-12-27 08:00,2011-12-29 16:00,2011-12-27 08:00,2011-12-29 16:00,2011-12-27 08:00,2011-12-29 16:00,,2011-12-29 08:00,2012-01-01 16:00,,PT_Normal,,,,,KKBqCxBqak+If0lspMZlWw,SOGwtvnb7k6IwMshJeUSKw,,,N,0,0,,,2011-11-01 20:34,2011-11-01 21:11,admin,admin
43,84014,1076,10908,841,1,0,N,N,N,CP_Drtn,TT_Task,DT_FixedDUR2,RV_OK,TK_NotStart,MT-1370,Material approval,,16,0,24,0,0,0,24,0,0,0,,,,2012-01-31 08:00,2012-02-02 16:00,,2012-01-29 08:00,2012-01-31 16:00,2012-01-29 08:00,2012-01-31 16:00,2012-01-29 08:00,2012-01-31 16:00,,2012-01-31 08:00,2012-02-02 16:00,,PT_Normal,,,,,ZfYDoXlCskmk8OCC8xRfow,4NJh3d8v/E+EbuJyRjBzWg,,,N,0,0,,,2011-11-01 20:34,2011-11-01 21:11,admin,admin
44,84015,1076,10909,841,1,0,N,N,N,CP_Drtn,TT_Task,DT_FixedDUR2,RV_OK,TK_NotStart,MT-1340,Material submittal,,160,0,24,0,0,0,24,0,0,0,,,,2012-01-31 08:00,2012-02-02 16:00,,2012-01-08 08:00,2012-01-10 16:00,2012-01-08 08:00,2012-01-10 16:00,2012-01-08 08:00,2012-01-10 16:00,,2012-01-31 08:00,2012-02-02 16:00,,PT_Normal,,,,,Hz+cQGCtp0mFAJZdysWK4w,SOGwtvnb7k6IwMshJeUSKw,,,N,0,0,,,2011-11-01 20:34,2011-11-01 21:11,admin,admin
45,84016,1076,10909,841,1,0,N,N,N,CP_Drtn,TT_Task,DT_FixedDUR2,RV_OK,TK_NotStart,MT-1350,Material approval,,160,8,24,0,0,0,24,0,0,0,,,,2012-03-04 08:00,2012-03-06 16:00,,2012-02-09 08:00,2012-02-12 16:00,2012-02-09 08:00,2012-02-12 16:00,2012-02-09 08:00,2012-02-12 16:00,,2012-03-04 08:00,2012-03-06 16:00,,PT_Normal,,,,,tEz3JCLySUWSFGvFnqt4gg,4NJh3d8v/E+EbuJyRjBzWg,,,N,0,0,,,2011-11-01 20:34,2011-11-01 21:11,admin,admin
46,84017,1076,10910,841,1,0,N,N,N,CP_Drtn,TT_Task,DT_FixedDUR2,RV_OK,TK_NotStart,MT-1320,Material submittal,,136,0,24,0,0,0,24,0,0,0,,,,2012-01-28 08:00,2012-01-30 16:00,,2012-01-08 08:00,2012-01-10 16:00,2012-01-08 08:00,2012-01-10 16:00,2012-01-08 08:00,2012-01-10 16:00,,2012-01-28 08:00,2012-01-30 16:00,,PT_Normal,,,,,LG6bXGfe0EKnUPmtHDzjYA,SOGwtvnb7k6IwMshJeUSKw,,,N,0,0,,,2011-11-01 20:34,2011-11-01 21:11,admin,admin
47,84018,1076,10910,841,1,0,N,N,N,CP_Drtn,TT_Task,DT_FixedDUR2,RV_OK,TK_NotStart,MT-1330,Material approval,,136,0,24,0,0,0,24,0,0,0,,,,2012-02-29 08:00,2012-03-03 16:00,,2012-02-09 08:00,2012-02-12 16:00,2012-02-09 08:00,2012-02-12 16:00,2012-02-09 08:00,2012-02-12 16:00,,2012-02-29 08:00,2012-03-03 16:00,,PT_Normal,,,,,KobKd/xKykOUWXRVqUsQTA,4NJh3d8v/E+EbuJyRjBzWg,,,N,0,0,,,2011-11-01 20:34,2011-11-01 21:11,admin,admin
48,84019,1076,10911,841,1,0,N,N,N,CP_Drtn,TT_Task,DT_FixedDUR2,RV_OK,TK_NotStart,MT-1220,Material submittal,,168,0,24,0,0,0,24,0,0,0,,,,2011-11-03 08:00,2011-11-13 16:00,,2011-10-10 08:00,2011-10-12 16:00,2011-10-10 08:00,2011-10-12 16:00,2011-10-10 08:00,2011-10-12 16:00,,2011-11-03 08:00,2011-11-13 16:00,,PT_Normal,,,,,+mCpdkTUtkC7tpmEmOVk9A,SOGwtvnb7k6IwMshJeUSKw,,,N,0,0,,,2011-11-01 20:34,2011-11-01 21:11,admin,admin
49,84020,1076,10911,841,1,0,N,N,N,CP_Drtn,TT_Task,DT_FixedDUR2,RV_OK,TK_NotStart,MT-1230,Material approval,,168,0,24,0,0,0,24,0,0,0,,,,2011-12-14 08:00,2011-12-17 16:00,,2011-11-19 08:00,2011-11-21 16:00,2011-11-19 08:00,2011-11-21 16:00,2011-11-19 08:00,2011-11-21 16:00,,2011-12-14 08:00,2011-12-17 16:00,,PT_Normal,,,,,dPQDSi8Ap0ygc6EQhirKjA,4NJh3d8v/E+EbuJyRjBzWg,,,N,0,0,,,2011-11-01 20:34,2011-11-01 21:11,admin,admin
50,84021,1076,10912,841,1,0,N,N,N,CP_Drtn,TT_Task,DT_FixedDUR2,RV_OK,TK_NotStart,MT-1260,Material submittal,,320,0,24,0,0,0,24,0,0,0,,,,2011-12-04 08:00,2011-12-06 16:00,,2011-10-10 08:00,2011-10-12 16:00,2011-10-10 08:00,2011-10-12 16:00,2011-10-10 08:00,2011-10-12 16:00,,2011-12-04 08:00,2011-12-06 16:00,,PT_Normal,,,,,L/fQ4l91REyK9/+woOYrYg,SOGwtvnb7k6IwMshJeUSKw,,,N,0,0,,,2011-11-01 20:34,2011-11-01 21:11,admin,admin
51,84022,1076,10912,841,1,0,N,N,N,CP_Drtn,TT_Task,DT_FixedDUR2,RV_OK,TK_NotStart,MT-1270,Material approval,,320,216,24,0,0,0,24,0,0,0,,,,2012-01-05 08:00,2012-01-08 16:00,,2011-11-19 08:00,2011-11-21 16:00,2011-11-19 08:00,2011-11-21 16:00,2011-11-19 08:00,2011-11-21 16:00,,2012-01-05 08:00,2012-01-08 16:00,,PT_Normal,,,,,lHe1B1QXbkeIFYq7inyXLA,4NJh3d8v/E+EbuJyRjBzWg,,,N,0,0,,,2011-11-01 20:34,2011-11-01 21:11,admin,admin
52,84023,1076,10913,841,1,0,N,N,N,CP_Drtn,TT_Task,DT_FixedDUR2,RV_OK,TK_NotStart,MT-1280,Material submittal,,0,0,24,0,0,0,24,0,0,0,,,,2011-10-16 08:00,2011-10-18 16:00,,2011-10-16 08:00,2011-10-18 16:00,2011-10-16 08:00,2011-10-18 16:00,2011-10-16 08:00,2011-10-18 16:00,,2011-10-16 08:00,2011-10-18 16:00,,PT_Normal,,,,,O05jjGbMNUGI6PSPLEL7rA,SOGwtvnb7k6IwMshJeUSKw,,,Y,0,0,,,2011-11-01 20:34,2011-11-01 21:11,admin,admin
53,84024,1076,10913,841,1,0,N,N,N,CP_Drtn,TT_Task,DT_FixedDUR2,RV_OK,TK_NotStart,MT-1290,Material approval,,0,0,24,0,0,0,24,0,0,0,,,,2011-11-24 08:00,2011-11-28 16:00,,2011-11-24 08:00,2011-11-28 16:00,2011-11-24 08:00,2011-11-28 16:00,2011-11-24 08:00,2011-11-28 16:00,,2011-11-24 08:00,2011-11-28 16:00,,PT_Normal,,,,,uhF+Om/LB0acrVQGtWJYaQ,4NJh3d8v/E+EbuJyRjBzWg,,,Y,0,0,,,2011-11-01 20:34,2011-11-01 21:11,admin,admin
54,84025,1076,10914,841,1,0,N,N,N,CP_Drtn,TT_Task,DT_FixedDUR2,RV_OK,TK_NotStart,MT-1300,Material submittal,,696,0,24,0,0,0,24,0,0,0,,,,2012-02-08 08:00,2012-02-11 16:00,,2011-10-22 08:00,2011-10-24 16:00,2011-10-22 08:00,2011-10-24 16:00,2011-10-22 08:00,2011-10-24 16:00,,2012-02-08 08:00,2012-02-11 16:00,,PT_Normal,,,,,VM6lLSE8M0emw8g5WcImvA,SOGwtvnb7k6IwMshJeUSKw,,,N,0,0,,,2011-11-01 20:34,2011-11-01 21:11,admin,admin
55,84026,1076,10914,841,1,0,N,N,N,CP_Drtn,TT_Task,DT_FixedDUR2,RV_OK,TK_NotStart,MT-1310,Material approval,,696,488,24,0,0,0,24,0,0,0,,,,2012-03-12 08:00,2012-03-14 16:00,,2011-12-01 08:00,2011-12-04 16:00,2011-12-01 08:00,2011-12-04 16:00,2011-12-01 08:00,2011-12-04 16:00,,2012-03-12 08:00,2012-03-14 16:00,,PT_Normal,,,,,KPKFV3t2ikuY2TMKKl54Hw,4NJh3d8v/E+EbuJyRjBzWg,,,N,0,0,,,2011-11-01 20:34,2011-11-01 21:11,admin,admin
56,84027,1076,10915,841,0,0,N,N,N,CP_Drtn,TT_Mile,DT_FixedDrtn,RV_OK,TK_NotStart,Ms 105,Site handing over to the contractor,,0,0,0,0,0,0,0,0,0,0,2011-09-17 08:00,,,2011-09-17 08:00,2011-09-17 08:00,,2011-09-17 08:00,2011-09-17 08:00,2011-09-17 08:00,2011-09-17 08:00,2011-09-17 08:00,2011-09-17 08:00,,2011-09-17 08:00,2011-09-17 08:00,CS_MSO,PT_Normal,,,,,Az1IQaojOEOeAKKElND0LA,,,,Y,0,0,,,2011-11-01 20:34,2011-11-01 20:34,admin,admin
57,84028,1076,10915,841,0,0,N,N,N,CP_Drtn,TT_Mile,DT_FixedDrtn,RV_OK,TK_NotStart,Ms 106,Contract agreement(to be verified),,0,0,0,0,0,0,0,0,0,0,,,,2011-09-17 08:00,2011-09-17 08:00,,2011-09-17 08:00,2011-09-17 08:00,2011-09-17 08:00,2011-09-17 08:00,2011-09-17 08:00,2011-09-17 08:00,,2011-09-17 08:00,2011-09-17 08:00,,PT_Normal,,,,,Qy1OVexJsUu3bGGoLVyw9w,,,,Y,0,0,,,2011-11-01 20:34,2011-11-01 20:34,admin,admin
58,84029,1076,10915,841,0,0,N,N,N,CP_Drtn,TT_Mile,DT_FixedDrtn,RV_OK,TK_NotStart,Ms 107,Receive advanced payment(to be verified),,0,0,0,0,0,0,0,0,0,0,,,,2011-09-17 08:00,2011-09-17 08:00,,2011-09-17 08:00,2011-09-17 08:00,2011-09-17 08:00,2011-09-17 08:00,2011-09-17 08:00,2011-09-17 08:00,,2011-09-17 08:00,2011-09-17 08:00,,PT_Normal,,,,,hqTfyoZKm0SgrpgPXrdonA,,,,Y,0,0,,,2011-11-01 20:34,2011-11-01 20:34,admin,admin
59,84030,1076,10915,841,1,0,N,N,N,CP_Drtn,TT_Task,DT_FixedDUR2,RV_OK,TK_NotStart,Ms 210,Demobilization & Dismantling all temporary facilities,,16,16,16,0,0,0,16,0,0,0,,,,2012-03-31 08:00,2012-04-01 16:00,,2012-03-28 08:00,2012-03-29 16:00,2012-03-28 08:00,2012-03-29 16:00,2012-03-28 08:00,2012-03-29 16:00,,2012-03-31 08:00,2012-04-01 16:00,,PT_Normal,,,,,4ZQp5mASSUSDVXpgxQZ+Og,,,,N,0,0,,,2011-11-01 20:34,2011-11-01 21:11,admin,admin
60,84031,1076,10915,841,1,0,N,N,N,CP_Drtn,TT_Task,DT_FixedDUR2,RV_OK,TK_NotStart,QA 001,Internal quality audit #1,,864,864,56,0,0,0,56,0,0,0,,,,2012-03-25 08:00,2012-04-01 16:00,,2011-11-19 08:00,2011-11-26 16:00,2011-11-19 08:00,2011-11-26 16:00,2011-11-19 08:00,2011-11-26 16:00,,2012-03-25 08:00,2012-04-01 16:00,,PT_Normal,,,,,hTENBAZobkaU6x8ZIAOuHQ,,,,N,0,0,,,2011-11-01 20:34,2011-11-01 21:11,admin,admin
61,84032,1076,10915,841,1,0,N,N,N,CP_Drtn,TT_Task,DT_FixedDUR2,RV_OK,TK_NotStart,QA 002,Internal quality audit #2,,248,248,56,0,0,0,56,0,0,0,,,,2012-03-25 08:00,2012-04-01 16:00,,2012-02-18 08:00,2012-02-25 16:00,2012-02-18 08:00,2012-02-25 16:00,2012-02-18 08:00,2012-02-25 16:00,,2012-03-25 08:00,2012-04-01 16:00,,PT_Normal,,,,,8aQFftTFF0K79K5+sn5CrA,,,,N,0,0,,,2011-11-01 20:34,2011-11-01 21:11,admin,admin
62,84033,1076,10915,841,0,0,N,N,N,CP_Drtn,TT_Mile,DT_FixedDrtn,RV_OK,TK_NotStart,Ms 108,Commencement date(receive advanced payment),,0,0,0,0,0,0,0,0,0,0,,,,2011-09-17 08:00,2011-09-17 08:00,,2011-09-17 08:00,2011-09-17 08:00,2011-09-17 08:00,2011-09-17 08:00,2011-09-17 08:00,2011-09-17 08:00,,2011-09-17 08:00,2011-09-17 08:00,,PT_Normal,,,,,KhOZz5V4dEKOXHNraIOBpA,W2mC3VMFx0aaA1fISCa4IA,,,Y,0,0,,,2011-11-01 20:34,2011-11-01 20:34,admin,admin
63,84034,1076,10915,841,1,0,N,N,N,CP_Drtn,TT_Task,DT_FixedDUR2,RV_OK,TK_NotStart,Ms 110,Mobilization & temporary facilities,,80,0,56,0,0,0,56,0,0,0,,,,2011-09-28 08:00,2011-10-05 16:00,,2011-09-17 08:00,2011-09-24 16:00,2011-09-17 08:00,2011-09-24 16:00,2011-09-17 08:00,2011-09-24 16:00,,2011-09-28 08:00,2011-10-05 16:00,,PT_Normal,,,,,LHIzI92x8UmpVwKgiDoMEw,,,,N,0,0,,,2011-11-01 20:34,2011-11-01 21:11,admin,admin
64,84035,1076,10915,841,0,0,N,N,N,CP_Drtn,TT_FinMile,DT_FixedDrtn,RV_OK,TK_NotStart,Ms 160,Juice preparation finish dates,,48,48,0,0,0,0,0,0,0,0,,,,2012-04-01 16:00,2012-04-01 16:00,,2012-03-25 16:00,2012-03-25 16:00,2012-03-25 16:00,2012-03-25 16:00,2012-03-25 16:00,2012-03-25 16:00,,2012-04-01 16:00,2012-04-01 16:00,,PT_Normal,,,,,jNbTmm6a9ESJEZJbB73OZA,,,,N,0,0,,,2011-11-01 20:34,2011-11-01 21:11,admin,admin
65,84036,1076,10915,841,0,0,N,N,N,CP_Drtn,TT_FinMile,DT_FixedDrtn,RV_OK,TK_NotStart,Ms 170,Pet filling finish date,,0,0,0,0,0,0,0,0,0,0,,,,2012-04-01 16:00,2012-04-01 16:00,,2012-04-01 16:00,2012-04-01 16:00,2012-04-01 16:00,2012-04-01 16:00,2012-04-01 16:00,2012-04-01 16:00,,2012-04-01 16:00,2012-04-01 16:00,,PT_Normal,,,,,7t8AZtRvjkqc3rJUlaYa9Q,,,,Y,0,0,,,2011-11-01 20:34,2011-11-01 21:11,admin,admin
66,84037,1076,10915,841,0,0,N,N,N,CP_Drtn,TT_FinMile,DT_FixedDrtn,RV_OK,TK_NotStart,Ms 180,Snag list finish dates,,32,32,0,0,0,0,0,0,0,0,,,,2012-04-01 16:00,2012-04-01 16:00,,2012-03-27 16:00,2012-03-27 16:00,2012-03-27 16:00,2012-03-27 16:00,2012-03-27 16:00,2012-03-27 16:00,,2012-04-01 16:00,2012-04-01 16:00,,PT_Normal,,,,,0yL+KIKVBkWTe68cpGigww,,,,N,0,0,,,2011-11-01 20:34,2011-11-01 21:11,admin,admin
67,84038,1076,10915,841,0,0,N,N,N,CP_Drtn,TT_FinMile,DT_FixedDrtn,RV_OK,TK_NotStart,Ms 120,As built drawings,,32,32,0,0,0,0,0,0,0,0,,,,2012-04-01 16:00,2012-04-01 16:00,,2012-03-27 16:00,2012-03-27 16:00,2012-03-27 16:00,2012-03-27 16:00,2012-03-27 16:00,2012-03-27 16:00,,2012-04-01 16:00,2012-04-01 16:00,,PT_Normal,,,,,aKJcHsSOTUmEFUOEyABi2w,,,,N,0,0,,,2011-11-01 20:34,2011-11-01 21:11,admin,admin
68,84039,1076,10915,841,1,0,N,N,N,CP_Drtn,TT_Task,DT_FixedDUR2,RV_OK,TK_NotStart,Ms 190,Soil Investigation Report,,256,152,120,0,0,0,120,0,0,0,,,,2011-11-01 08:00,2011-11-24 16:00,,2011-09-25 08:00,2011-10-11 16:00,2011-09-25 08:00,2011-10-11 16:00,2011-09-25 08:00,2011-10-11 16:00,,2011-11-01 08:00,2011-11-24 16:00,,PT_Normal,,,,,M/jOfiulBUGGarqyKl9BIw,,,,N,0,0,,,2011-11-01 20:34,2011-11-01 21:11,admin,admin
69,84040,1076,10915,841,1,0,N,N,N,CP_Drtn,TT_Task,DT_FixedDUR2,RV_OK,TK_NotStart,Ms 111,Site survey,,104,0,56,0,0,0,56,0,0,0,,,,2011-10-10 08:00,2011-10-17 16:00,,2011-09-25 08:00,2011-10-02 16:00,2011-09-25 08:00,2011-10-02 16:00,2011-09-25 08:00,2011-10-02 16:00,,2011-10-10 08:00,2011-10-17 16:00,,PT_Normal,,,,,ACUEjM0RCEOmHMT+ELD7Iw,,,,N,0,0,,,2011-11-01 20:34,2011-11-01 21:11,admin,admin
70,84041,1076,10915,841,0,0,N,N,N,CP_Drtn,TT_FinMile,DT_FixedDrtn,RV_OK,TK_NotStart,Ms 130,UHT FINISH DATE,,16,0,0,0,0,0,0,0,0,0,,,,2012-03-19 16:00,2012-03-19 16:00,,2012-03-17 16:00,2012-03-17 16:00,2012-03-17 16:00,2012-03-17 16:00,2012-03-17 16:00,2012-03-17 16:00,,2012-03-19 16:00,2012-03-19 16:00,,PT_Normal,,,,,p341l8lRUE2k+uNGxIYHSA,,,,N,0,0,,,2011-11-01 20:34,2011-11-01 21:11,admin,admin
71,84042,1076,10915,841,0,0,N,N,N,CP_Drtn,TT_FinMile,DT_FixedDrtn,RV_OK,TK_NotStart,Ms 200,Project completion & final handing over,,0,0,0,0,0,0,0,0,0,0,,,,2012-04-01 16:00,2012-04-01 16:00,,2012-04-01 16:00,2012-04-01 16:00,2012-04-01 16:00,2012-04-01 16:00,2012-04-01 16:00,2012-04-01 16:00,,2012-04-01 16:00,2012-04-01 16:00,,PT_Normal,,,,,/yUuuBBTrkSYh9FDY4+UlA,,,,Y,0,0,,,2011-11-01 20:34,2011-11-01 21:11,admin,admin
72,84043,1076,10915,841,0,0,N,N,N,CP_Drtn,TT_Mile,DT_FixedDrtn,RV_OK,TK_NotStart,Ms 100,Letter of Acceptance,,0,0,0,0,0,0,0,0,0,0,,,,2011-08-25 08:00,2011-08-25 08:00,,2011-08-25 08:00,2011-08-25 08:00,2011-08-25 08:00,2011-08-25 08:00,2011-08-25 08:00,2011-08-25 08:00,,2011-08-25 08:00,2011-08-25 08:00,,PT_Normal,,,,,dNoBcgXFpEaMlMbDBi+giw,,,,Y,0,0,,,2011-11-01 20:34,2011-11-01 20:34,admin,admin
73,84044,1076,10918,841,1,0,N,N,N,CP_Drtn,TT_Task,DT_FixedDUR2,RV_OK,TK_NotStart,JP-C100,Demolishing Slab on Grade,,120,0,56,0,0,0,56,0,0,0,,,,2011-10-16 08:00,2011-10-23 16:00,,2011-09-28 08:00,2011-10-05 16:00,2011-09-28 08:00,2011-10-05 16:00,2011-09-28 08:00,2011-10-05 16:00,,2011-10-16 08:00,2011-10-23 16:00,,PT_Normal,,,,,CBTi6KA1vEW2mAahlWoGgg,mgq7N9akDUaPYyuTBZxZwg,,,N,0,0,,,2011-11-01 20:34,2011-11-01 21:11,admin,admin
74,84045,1076,10918,841,1,0,N,N,N,CP_Drtn,TT_Task,DT_FixedDUR2,RV_OK,TK_NotStart,JP-C120,Excavation,,120,0,96,0,0,0,96,0,0,0,,,,2011-10-31 08:00,2011-11-20 16:00,,2011-10-13 08:00,2011-10-26 16:00,2011-10-13 08:00,2011-10-26 16:00,2011-10-13 08:00,2011-10-26 16:00,,2011-10-31 08:00,2011-11-20 16:00,,PT_Normal,,,,,jiQHDFHJ6USLgAIMYDC1Gw,3nrHN/97jEGTpT0tIRRqpQ,,,N,0,0,,,2011-11-01 20:34,2011-11-01 21:11,admin,admin
75,84046,1076,10918,841,1,0,N,N,N,CP_Drtn,TT_Task,DT_FixedDUR2,RV_OK,TK_NotStart,JP-C130,Demolishing Footing and Tie Beam,,120,0,56,0,0,0,56,0,0,0,,,,2011-11-21 08:00,2011-11-29 16:00,,2011-10-27 08:00,2011-11-03 16:00,2011-10-27 08:00,2011-11-03 16:00,2011-10-27 08:00,2011-11-03 16:00,,2011-11-21 08:00,2011-11-29 16:00,,PT_Normal,,,,,/OxB9ZTib06ICb1YYS0zcw,PmT0EnHFx0u3f5eNIdhz9w,,,N,0,0,,,2011-11-01 20:34,2011-11-01 21:11,admin,admin
76,84047,1076,10918,841,1,0,N,N,N,CP_Drtn,TT_Task,DT_FixedDUR2,RV_OK,TK_NotStart,JP-C140,Replacement & back fill Under Footing,,120,0,80,0,0,0,80,0,0,0,,,,2011-11-30 08:00,2011-12-11 16:00,,2011-11-12 08:00,2011-11-22 16:00,2011-11-12 08:00,2011-11-22 16:00,2011-11-12 08:00,2011-11-22 16:00,,2011-11-30 08:00,2011-12-11 16:00,,PT_Normal,,,,,Osk10iLMFkS7CzKAge3AQg,,,,N,0,0,,,2011-11-01 20:34,2011-11-01 21:11,admin,admin
77,84048,1076,10918,841,1,0,N,N,N,CP_Drtn,TT_Task,DT_FixedDUR2,RV_OK,TK_NotStart,JP-C150,Plain concrete 100 under footings,2104,120,0,24,0,66,66,24,0,0,0,,,,2011-12-12 08:00,2011-12-14 16:00,,2011-11-23 08:00,2011-11-26 16:00,2011-11-23 08:00,2011-11-26 16:00,2011-11-23 08:00,2011-11-26 16:00,,2011-12-12 08:00,2011-12-14 16:00,,PT_Normal,,,,,Vx88D8FE80yLPAaUNTrIBg,,,,N,0,0,,,2011-11-01 20:34,2011-11-01 21:11,admin,admin
78,84049,1076,10918,841,1,0,N,N,N,CP_Drtn,TT_Task,DT_FixedDUR2,RV_OK,TK_NotStart,JP-C160,R.C. for footings & tie beams,2103,120,0,56,0,67,67,56,0,0,0,,,,2011-12-15 08:00,2011-12-22 16:00,,2011-11-28 08:00,2011-12-05 16:00,2011-11-28 08:00,2011-12-05 16:00,2011-11-28 08:00,2011-12-05 16:00,,2011-12-15 08:00,2011-12-22 16:00,,PT_Normal,,,,,ZXm9s6yeRkWOyXXI8e1bvw,,,,N,0,0,,,2011-11-01 20:34,2011-11-01 21:11,admin,admin
79,84050,1076,10918,841,1,0,N,N,N,CP_Drtn,TT_Task,DT_FixedDUR2,RV_OK,TK_NotStart,JP-C200,Steel structure erection,,120,0,200,0,0,0,200,0,0,0,,,,2012-01-16 08:00,2012-02-13 16:00,,2011-12-29 08:00,2012-01-26 16:00,2011-12-29 08:00,2012-01-26 16:00,2011-12-29 08:00,2012-01-26 16:00,,2012-01-16 08:00,2012-02-13 16:00,,PT_Normal,,,,,TSjcdlY2z0uD2P0tkrlIlQ,,,,N,0,0,,,2011-11-01 20:34,2011-11-01 21:11,admin,admin
80,84051,1076,10918,841,1,0,N,N,N,CP_Drtn,TT_Task,DT_FixedDUR2,RV_OK,TK_NotStart,JP-C190,Soil replacement under slab on grade,,120,0,56,0,0,0,56,0,0,0,,,,2012-01-02 08:00,2012-01-09 16:00,,2011-12-15 08:00,2011-12-22 16:00,2011-12-15 08:00,2011-12-22 16:00,2011-12-15 08:00,2011-12-22 16:00,,2012-01-02 08:00,2012-01-09 16:00,,PT_Normal,,,,,KEzYxjYsBkCLmS/vv/JwAg,,,,N,0,0,,,2011-11-01 20:34,2011-11-01 21:11,admin,admin
81,84052,1076,10918,841,1,0,N,N,N,CP_Drtn,TT_Task,DT_FixedDUR2,RV_OK,TK_NotStart,JP-C210,Slab On Grade,,120,0,40,0,0,0,40,0,0,0,,,,2012-01-10 08:00,2012-01-15 16:00,,2011-12-24 08:00,2011-12-28 16:00,2011-12-24 08:00,2011-12-28 16:00,2011-12-24 08:00,2011-12-28 16:00,,2012-01-10 08:00,2012-01-15 16:00,,PT_Normal,,,,,T+2GGXyaEUGfO2yfAHjlyA,,,,N,0,0,,,2011-11-01 20:34,2011-11-01 21:11,admin,admin
82,84053,1076,10918,841,1,0,N,N,N,CP_Drtn,TT_Task,DT_FixedDUR2,RV_OK,TK_NotStart,JP-C220,Concrete Screed,,216,0,80,0,0,0,80,0,0,0,,,,2012-02-28 08:00,2012-03-10 16:00,,2012-01-28 08:00,2012-02-07 16:00,2012-01-28 08:00,2012-02-07 16:00,2012-01-28 08:00,2012-02-07 16:00,,2012-02-28 08:00,2012-03-10 16:00,,PT_Normal,,,,,Av0qM8bRakC6ODm++X6jyg,,,,N,0,0,,,2011-11-01 20:34,2011-11-01 21:11,admin,admin
83,84054,1076,10918,841,1,0,N,N,N,CP_Drtn,TT_Task,DT_FixedDUR2,RV_OK,TK_NotStart,JP-C170,R.c for pedestals,,120,0,64,0,0,0,64,0,0,0,,,,2011-12-24 08:00,2012-01-01 16:00,,2011-12-06 08:00,2011-12-14 16:00,2011-12-06 08:00,2011-12-14 16:00,2011-12-06 08:00,2011-12-14 16:00,,2011-12-24 08:00,2012-01-01 16:00,,PT_Normal,,,,,/zHAUdwswEmGNd18m+KTFQ,,,,N,0,0,,,2011-11-01 20:34,2011-11-01 21:11,admin,admin
84,84055,1076,10918,841,1,0,N,N,N,CP_Drtn,TT_Task,DT_FixedDUR2,RV_OK,TK_NotStart,JP-A160,RC for deck floors,,192,0,56,0,0,0,56,0,0,0,,,,2012-03-07 08:00,2012-03-14 16:00,,2012-02-08 08:00,2012-02-15 16:00,2012-02-08 08:00,2012-02-15 16:00,2012-02-08 08:00,2012-02-15 16:00,,2012-03-07 08:00,2012-03-14 16:00,,PT_Normal,,,,,lUhI7kFsQUmA2WuuoqGoqA,,,,N,0,0,,,2011-11-01 20:34,2011-11-01 21:11,admin,admin
85,84056,1076,10918,841,1,0,N,N,N,CP_Drtn,TT_Task,DT_FixedDUR2,RV_OK,TK_NotStart,JP-A170,Roof R.c slab,,208,0,40,0,0,0,40,0,0,0,,,,2012-03-10 08:00,2012-03-14 16:00,,2012-02-08 08:00,2012-02-13 16:00,2012-02-08 08:00,2012-02-13 16:00,2012-02-08 08:00,2012-02-13 16:00,,2012-03-10 08:00,2012-03-14 16:00,,PT_Normal,,,,,s269lSncCESFQV86ihebNA,,,,N,0,0,,,2011-11-01 20:34,2011-11-01 21:11,admin,admin
86,84057,1076,10918,841,1,0,N,N,N,CP_Drtn,TT_Task,DT_FixedDUR2,RV_OK,TK_NotStart,JP-C180,Anchors for steel structure,,216,96,48,0,0,0,48,0,0,0,,,,2012-01-09 08:00,2012-01-15 16:00,,2011-12-08 08:00,2011-12-14 16:00,2011-12-08 08:00,2011-12-14 16:00,2011-12-08 08:00,2011-12-14 16:00,,2012-01-09 08:00,2012-01-15 16:00,,PT_Normal,,,,,Yuyt48M9B0yZC2EoMAAIhw,,,,N,0,0,,,2011-11-01 20:34,2011-11-01 21:11,admin,admin
87,84058,1076,10918,841,1,0,N,N,N,CP_Drtn,TT_Task,DT_FixedDUR2,RV_OK,TK_NotStart,JP-C110,Utilities diversion(plumbing),,120,0,64,0,0,0,64,0,0,0,,,,2011-10-24 08:00,2011-11-01 16:00,,2011-10-06 08:00,2011-10-15 16:00,2011-10-06 08:00,2011-10-15 16:00,2011-10-06 08:00,2011-10-15 16:00,,2011-10-24 08:00,2011-11-01 16:00,,PT_Normal,,,,,vLcAjWr4Kk2/dSADLAnXtQ,,,,N,0,0,,,2011-11-01 20:34,2011-11-01 21:11,admin,admin
88,84059,1076,10918,841,1,0,N,N,N,CP_Drtn,TT_Task,DT_FixedDUR2,RV_OK,TK_NotStart,JP-C230,Footings insulation/water proofing,,728,728,16,0,0,0,16,0,0,0,,,,2012-03-31 08:00,2012-04-01 16:00,,2011-12-15 08:00,2011-12-17 16:00,2011-12-15 08:00,2011-12-17 16:00,2011-12-15 08:00,2011-12-17 16:00,,2012-03-31 08:00,2012-04-01 16:00,,PT_Normal,,,,,yKNUQ6RDeEuM+wbP2SOEsg,,,,N,0,0,,,2011-11-01 20:34,2011-11-01 21:11,admin,admin
89,84060,1076,10918,841,1,0,N,N,N,CP_Drtn,TT_Task,DT_FixedDUR2,RV_OK,TK_NotStart,JP-C240,Concrete guard base,,296,248,80,0,0,0,80,0,0,0,,,,2012-03-11 08:00,2012-03-21 16:00,,2012-01-28 08:00,2012-02-07 16:00,2012-01-28 08:00,2012-02-07 16:00,2012-01-28 08:00,2012-02-07 16:00,,2012-03-11 08:00,2012-03-21 16:00,,PT_Normal,,,,,HfX+QV+QakCbKZx75ZzXzg,,,,N,0,0,,,2011-11-01 20:34,2011-11-01 21:11,admin,admin
90,84061,1076,10919,841,1,0,N,N,N,CP_Drtn,TT_Rsrc,DT_FixedDUR2,RV_OK,TK_NotStart,JP-A350,Over head sectional Door erection,,88,0,96,0,0,0,96,0,0,0,,,,2012-03-08 08:00,2012-03-21 16:00,,2012-02-25 08:00,2012-03-08 16:00,2012-02-25 08:00,2012-03-08 16:00,2012-02-25 08:00,2012-03-08 16:00,,2012-03-08 08:00,2012-03-21 16:00,,PT_Normal,,,,,QSEM1YIP50C1AaATKG7NJw,lNDsS8LdSh+FFX08rV+eHg,,,N,0,0,,,2011-11-01 20:34,2011-11-01 21:11,admin,admin
91,84062,1076,10919,841,1,0,N,N,N,CP_Drtn,TT_Task,DT_FixedDUR2,RV_OK,TK_NotStart,JP-A280,Dismantle the old existed doors,,192,144,40,0,0,0,40,0,0,0,,,,2012-03-27 08:00,2012-04-01 16:00,,2012-02-28 08:00,2012-03-04 16:00,2012-02-28 08:00,2012-03-04 16:00,2012-02-28 08:00,2012-03-04 16:00,,2012-03-27 08:00,2012-04-01 16:00,,PT_Normal,,,,,txQ9klg83ECZi0SnpoYIKg,zoPTVNvBY0upM28k5bosHw,,,N,0,0,,,2011-11-01 20:34,2011-11-01 21:11,admin,admin
92,84063,1076,10919,841,1,0,N,N,N,CP_Drtn,TT_Task,DT_FixedDUR2,RV_OK,TK_NotStart,JP-A110,Dismantle Steel Handrail,,120,0,16,0,0,0,16,0,0,0,,,,2011-10-13 08:00,2011-10-15 16:00,,2011-09-26 08:00,2011-09-27 16:00,2011-09-26 08:00,2011-09-27 16:00,2011-09-26 08:00,2011-09-27 16:00,,2011-10-13 08:00,2011-10-15 16:00,,PT_Normal,,,,,CggoGsRrUk2JewvPUmcQYA,EKcz1FZ71Ey6WuKjGHAVCQ,,,N,0,0,,,2011-11-01 20:34,2011-11-01 21:11,admin,admin
93,84064,1076,10919,841,1,0,N,N,N,CP_Drtn,TT_Task,DT_FixedDUR2,RV_OK,TK_NotStart,JP-A120,Sandwich Panel for roofs & walls,,120,0,120,0,0,0,120,0,0,0,,,,2012-02-14 08:00,2012-03-01 16:00,,2012-01-28 08:00,2012-02-13 16:00,2012-01-28 08:00,2012-02-13 16:00,2012-01-28 08:00,2012-02-13 16:00,,2012-02-14 08:00,2012-03-01 16:00,,PT_Normal,,,,,8El3tN8Rl0OWtqKEGHwObw,,,,N,0,0,,,2011-11-01 20:34,2011-11-01 21:11,admin,admin
94,84065,1076,10919,841,1,0,N,N,N,CP_Drtn,TT_Task,DT_FixedDUR2,RV_OK,TK_NotStart,JP-A290,Polyurethane Flooring,,48,0,56,0,0,0,56,0,0,0,,,,2012-03-22 08:00,2012-03-29 16:00,,2012-03-15 08:00,2012-03-22 16:00,2012-03-15 08:00,2012-03-22 16:00,2012-03-15 08:00,2012-03-22 16:00,,2012-03-22 08:00,2012-03-29 16:00,,PT_Normal,,,,,x/kQHWsetESp+Wl2ZdvkeA,,,,N,0,0,,,2011-11-01 20:34,2011-11-01 21:11,admin,admin
95,84066,1076,10919,841,1,0,N,N,N,CP_Drtn,TT_Rsrc,DT_FixedDUR2,RV_OK,TK_NotStart,JP-A250,Doors erection,,104,0,80,0,0,0,80,0,0,0,,,,2012-03-11 08:00,2012-03-21 16:00,,2012-02-25 08:00,2012-03-06 16:00,2012-02-25 08:00,2012-03-06 16:00,2012-02-25 08:00,2012-03-06 16:00,,2012-03-11 08:00,2012-03-21 16:00,,PT_Normal,,,,,i4YfeGl/z0eE0tiTaYoBAA,,,,N,0,0,,,2011-11-01 20:34,2011-11-01 21:11,admin,admin
96,84067,1076,10919,841,1,0,N,N,N,CP_Drtn,TT_Task,DT_FixedDUR2,RV_OK,TK_NotStart,JP-A210,Sheet Waterproofing,,208,0,40,0,0,0,40,0,0,0,,,,2012-03-21 08:00,2012-03-26 16:00,,2012-02-20 08:00,2012-02-25 16:00,2012-02-20 08:00,2012-02-25 16:00,2012-02-20 08:00,2012-02-25 16:00,,2012-03-21 08:00,2012-03-26 16:00,,PT_Normal,,,,,g6hCHPwp+Ey7zDvDo/m6GQ,,,,N,0,0,,,2011-11-01 20:34,2011-11-01 21:11,admin,admin
97,84068,1076,10919,841,1,0,N,N,N,CP_Drtn,TT_Task,DT_FixedDUR2,RV_OK,TK_NotStart,JP-A220,Thermal Insulation,,208,0,40,0,0,0,40,0,0,0,,,,2012-03-27 08:00,2012-04-01 16:00,,2012-02-26 08:00,2012-03-01 16:00,2012-02-26 08:00,2012-03-01 16:00,2012-02-26 08:00,2012-03-01 16:00,,2012-03-27 08:00,2012-04-01 16:00,,PT_Normal,,,,,ngfkm/RmiEuNWjpjQI5KsQ,,,,N,0,0,,,2011-11-01 20:34,2011-11-01 21:11,admin,admin
98,84069,1076,10919,841,1,0,N,N,N,CP_Drtn,TT_Task,DT_FixedDUR2,RV_OK,TK_NotStart,JP-A230,Roof Finish& rigid insulation 20mm thick,,208,160,40,0,0,0,40,0,0,0,,,,2012-03-27 08:00,2012-04-01 16:00,,2012-02-26 08:00,2012-03-01 16:00,2012-02-26 08:00,2012-03-01 16:00,2012-02-26 08:00,2012-03-01 16:00,,2012-03-27 08:00,2012-04-01 16:00,,PT_Normal,,,,,CPWQ7q0wE0SkjgCWGfn0uw,,,,N,0,0,,,2011-11-01 20:34,2011-11-01 21:11,admin,admin
99,84070,1076,10919,841,1,0,N,N,N,CP_Drtn,TT_Task,DT_FixedDUR2,RV_OK,TK_NotStart,JP-A180,External Cement Plaster,,120,0,72,0,0,0,72,0,0,0,,,,2012-03-03 08:00,2012-03-12 16:00,,2012-02-14 08:00,2012-02-23 16:00,2012-02-14 08:00,2012-02-23 16:00,2012-02-14 08:00,2012-02-23 16:00,,2012-03-03 08:00,2012-03-12 16:00,,PT_Normal,,,,,yD/16YDrmE6lngHmhFxlrA,,,,N,0,0,,,2011-11-01 20:34,2011-11-01 21:11,admin,admin
100,84071,1076,10919,841,1,0,N,N,N,CP_Drtn,TT_Task,DT_FixedDUR2,RV_OK,TK_NotStart,JP-A240,Epoxy Paint,2106,120,72,80,0,4,4,80,0,0,0,,,,2012-03-13 08:00,2012-03-24 16:00,,2012-02-25 08:00,2012-03-06 16:00,2012-02-25 08:00,2012-03-06 16:00,2012-02-25 08:00,2012-03-06 16:00,,2012-03-13 08:00,2012-03-24 16:00,,PT_Normal,,,,,6USYczvdfEeOoXrnTRex+g,,,,N,0,0,,,2011-11-01 20:34,2011-11-01 21:11,admin,admin
101,84072,1076,10919,841,1,0,N,N,N,CP_Drtn,TT_Task,DT_FixedDUR2,RV_OK,TK_NotStart,JP-A190,Sandwich Panel for walls,,192,0,80,0,0,0,80,0,0,0,,,,2012-03-15 08:00,2012-03-26 16:00,,2012-02-16 08:00,2012-02-27 16:00,2012-02-16 08:00,2012-02-27 16:00,2012-02-16 08:00,2012-02-27 16:00,,2012-03-15 08:00,2012-03-26 16:00,,PT_Normal,,,,,vrI9bIyf0EalKSPp9zs78A,lwsFW5iuok+tQAtYTQu6qA,,,N,0,0,,,2011-11-01 20:34,2011-11-01 21:11,admin,admin
102,84073,1076,10919,841,1,0,N,N,N,CP_Drtn,TT_Task,DT_FixedDUR2,RV_OK,TK_NotStart,JP-A310,Acrylic paint,2105,152,104,40,0,2,2,40,0,0,0,,,,2012-03-19 08:00,2012-03-24 16:00,,2012-02-26 08:00,2012-03-01 16:00,2012-02-26 08:00,2012-03-01 16:00,2012-02-26 08:00,2012-03-01 16:00,,2012-03-19 08:00,2012-03-24 16:00,,PT_Normal,,,,,t2JpxCRqc0alInbi6a4Bsw,,,,N,0,0,,,2011-11-01 20:34,2011-11-01 21:11,admin,admin
103,84074,1076,10919,841,1,0,N,N,N,CP_Drtn,TT_Task,DT_FixedDUR2,RV_OK,TK_NotStart,JP-A130,Install corrugated sheets on roof level,,192,0,80,0,0,0,80,0,0,0,,,,2012-02-25 08:00,2012-03-06 16:00,,2012-01-28 08:00,2012-02-07 16:00,2012-01-28 08:00,2012-02-07 16:00,2012-01-28 08:00,2012-02-07 16:00,,2012-02-25 08:00,2012-03-06 16:00,,PT_Normal,,,,,S500RIWJlECvoaWHMrXd1A,,,,N,0,0,,,2011-11-01 20:34,2011-11-01 21:11,admin,admin
104,84075,1076,10919,841,1,0,N,N,N,CP_Drtn,TT_Task,DT_FixedDUR2,RV_OK,TK_NotStart,JP-A140,Install corrugated sheets on mezzanine level,,208,0,80,0,0,0,80,0,0,0,,,,2012-02-27 08:00,2012-03-08 16:00,,2012-01-28 08:00,2012-02-07 16:00,2012-01-28 08:00,2012-02-07 16:00,2012-01-28 08:00,2012-02-07 16:00,,2012-02-27 08:00,2012-03-08 16:00,,PT_Normal,,,,,cof3dVfXXkO2yAIO7UShbw,SN7ca/7Df0KI5w3hVwMolQ,,,N,0,0,,,2011-11-01 20:34,2011-11-01 21:11,admin,admin
105,84076,1076,10919,841,1,0,N,N,N,CP_Drtn,TT_Task,DT_FixedDUR2,RV_OK,TK_NotStart,JP-A200,Slopped plain concrete,,208,0,40,0,0,0,40,0,0,0,,,,2012-03-15 08:00,2012-03-20 16:00,,2012-02-14 08:00,2012-02-19 16:00,2012-02-14 08:00,2012-02-19 16:00,2012-02-14 08:00,2012-02-19 16:00,,2012-03-15 08:00,2012-03-20 16:00,,PT_Normal,,,,,fPZvYc0SgEeuasLgUqLzkg,,,,N,0,0,,,2011-11-01 20:34,2011-11-01 21:11,admin,admin
106,84077,1076,10919,841,1,0,N,N,N,CP_Drtn,TT_Task,DT_FixedDUR2,RV_OK,TK_NotStart,JP-A300,Final touch up,,48,0,32,0,0,0,32,0,0,0,,,,2012-03-25 08:00,2012-03-28 16:00,,2012-03-18 08:00,2012-03-21 16:00,2012-03-18 08:00,2012-03-21 16:00,2012-03-18 08:00,2012-03-21 16:00,,2012-03-25 08:00,2012-03-28 16:00,,PT_Normal,,,,,+/4imvCWR0Su75SWwoKAFg,,,,N,0,0,,,2011-11-01 20:34,2011-11-01 21:11,admin,admin
107,84078,1076,10919,841,1,0,N,N,N,CP_Drtn,TT_Task,DT_FixedDUR2,RV_OK,TK_NotStart,JP-A320,Handing over & comissioning,,48,0,24,0,0,0,24,0,0,0,,,,2012-03-29 08:00,2012-04-01 16:00,,2012-03-22 08:00,2012-03-25 16:00,2012-03-22 08:00,2012-03-25 16:00,2012-03-22 08:00,2012-03-25 16:00,,2012-03-29 08:00,2012-04-01 16:00,,PT_Normal,,,,,iH6Ia73MvESZDFbL32nG6Q,,,,N,0,0,,,2011-11-01 20:34,2011-11-01 21:11,admin,admin
108,84079,1076,10919,841,1,0,N,N,N,CP_Drtn,TT_Task,DT_FixedDUR2,RV_OK,TK_NotStart,JP-A260,Louvers erection for upper roof,,152,104,104,0,0,0,104,0,0,0,,,,2012-03-18 08:00,2012-04-01 16:00,,2012-02-25 08:00,2012-03-10 16:00,2012-02-25 08:00,2012-03-10 16:00,2012-02-25 08:00,2012-03-10 16:00,,2012-03-18 08:00,2012-04-01 16:00,,PT_Normal,,,,,B9ybgAiVEUer+3NgVQ5Llw,,,,N,0,0,,,2011-11-01 20:34,2011-11-01 21:11,admin,admin
109,84080,1076,10919,841,1,0,N,N,N,CP_Drtn,TT_Task,DT_FixedDUR2,RV_OK,TK_NotStart,JP-A100,Utilities diversion(Electrical),,120,0,80,0,0,0,80,0,0,0,,,,2011-10-12 08:00,2011-10-23 16:00,,2011-09-25 08:00,2011-10-05 16:00,2011-09-25 08:00,2011-10-05 16:00,2011-09-25 08:00,2011-10-05 16:00,,2011-10-12 08:00,2011-10-23 16:00,,PT_Normal,,,,,1yzVrSYryUGWpCyJi/OvMA,,,,N,0,0,,,2011-11-01 20:34,2011-11-01 21:11,admin,admin
110,84081,1076,10919,841,1,0,N,N,N,CP_Drtn,TT_Task,DT_FixedDUR2,RV_OK,TK_NotStart,JP-A150,Steel structure paintings,,208,160,240,0,0,0,240,0,0,0,,,,2012-02-27 08:00,2012-04-01 16:00,,2012-01-28 08:00,2012-03-01 16:00,2012-01-28 08:00,2012-03-01 16:00,2012-01-28 08:00,2012-03-01 16:00,,2012-02-27 08:00,2012-04-01 16:00,,PT_Normal,,,,,PDMtT2S8b0OtVM32FxlEkg,,,,N,0,0,,,2011-11-01 20:34,2011-11-01 21:11,admin,admin
111,84082,1076,10919,841,1,0,N,N,N,CP_Drtn,TT_Task,DT_FixedDUR2,RV_OK,TK_NotStart,JP-A270,Dismantle Sandwich Panel(after construction),,152,24,104,0,0,0,104,0,0,0,,,,2012-03-18 08:00,2012-04-01 16:00,,2012-02-25 08:00,2012-03-10 16:00,2012-02-25 08:00,2012-03-10 16:00,2012-02-25 08:00,2012-03-10 16:00,,2012-03-18 08:00,2012-04-01 16:00,,PT_Normal,,,,,HhcPcdoc00CwO1AkzntgXA,,,,N,0,0,,,2011-11-01 20:34,2011-11-01 21:11,admin,admin
112,84083,1076,10919,841,1,0,N,N,N,CP_Drtn,TT_Task,DT_FixedDUR2,RV_OK,TK_NotStart,JP-A330,Steel ladder &steel hand rail erection,,72,24,112,0,0,0,112,0,0,0,,,,2012-03-06 08:00,2012-03-21 16:00,,2012-02-25 08:00,2012-03-11 16:00,2012-02-25 08:00,2012-03-11 16:00,2012-02-25 08:00,2012-03-11 16:00,,2012-03-06 08:00,2012-03-21 16:00,,PT_Normal,,,,,qzz5PJF1v0SRkAJSC201dA,,,,N,0,0,,,2011-11-01 20:34,2011-11-01 21:11,admin,admin
113,84084,1076,10919,841,1,0,N,N,N,CP_Drtn,TT_Task,DT_FixedDUR2,RV_OK,TK_NotStart,JP-A340,Guard bollard erection,,256,208,56,0,0,0,56,0,0,0,,,,2012-03-17 08:00,2012-03-24 16:00,,2012-02-08 08:00,2012-02-15 16:00,2012-02-08 08:00,2012-02-15 16:00,2012-02-08 08:00,2012-02-15 16:00,,2012-03-17 08:00,2012-03-24 16:00,,PT_Normal,,,,,sATYsoURaE69o9rMAamURg,,,,N,0,0,,,2011-11-01 20:34,2011-11-01 21:11,admin,admin
114,84085,1076,10922,841,1,0,N,N,N,CP_Drtn,TT_Task,DT_FixedDUR2,RV_OK,TK_NotStart,PET-Z1-CC-370,Columns & rafters (@level 21.85&22.75),,144,0,40,0,0,0,40,0,0,0,,,,2012-02-09 08:00,2012-02-14 16:00,,2012-01-19 08:00,2012-01-24 16:00,2012-01-19 08:00,2012-01-24 16:00,2012-01-19 08:00,2012-01-24 16:00,,2012-02-09 08:00,2012-02-14 16:00,,PT_Normal,,,,,GRFHZKM7d0yyOqbRC9Mntg,,,,N,0,0,,,2011-11-01 20:34,2011-11-01 21:11,admin,admin
115,84086,1076,10922,841,1,0,N,N,N,CP_Drtn,TT_Task,DT_FixedDUR2,RV_OK,TK_NotStart,PET-Z1-CC-100,Demolishing and/or chamfering the existed Concrete parts,,104,0,24,0,0,0,24,0,0,0,,,,2011-10-10 08:00,2011-10-12 16:00,,2011-09-25 08:00,2011-09-27 16:00,2011-09-25 08:00,2011-09-27 16:00,2011-09-25 08:00,2011-09-27 16:00,,2011-10-10 08:00,2011-10-12 16:00,,PT_Normal,,,,,kKOcU+IFc0yQcnAfInu2VQ,UV4BZT/8oUKigbxFWA0WJg,,,N,0,0,,,2011-11-01 20:34,2011-11-01 21:11,admin,admin
116,84087,1076,10922,841,1,0,N,N,N,CP_Drtn,TT_Task,DT_FixedDUR2,RV_OK,TK_NotStart,PET-Z1-CC-110,Excavation,,104,0,96,0,0,0,96,0,0,0,,,,2011-10-13 08:00,2011-10-26 16:00,,2011-09-28 08:00,2011-10-11 16:00,2011-09-28 08:00,2011-10-11 16:00,2011-09-28 08:00,2011-10-11 16:00,,2011-10-13 08:00,2011-10-26 16:00,,PT_Normal,,,,,yiUBLgm/C0mVcTPe4wfkUg,MSaLJRU8cUm3CbmnxibhzQ,,,N,0,0,,,2011-11-01 20:34,2011-11-01 21:11,admin,admin
117,84088,1076,10922,841,1,0,N,N,N,CP_Drtn,TT_Task,DT_FixedDUR2,RV_OK,TK_NotStart,PET-Z1-CC-130,Replacement Under Footings,,104,0,96,0,0,0,96,0,0,0,,,,2011-10-27 08:00,2011-11-16 16:00,,2011-10-12 08:00,2011-10-25 16:00,2011-10-12 08:00,2011-10-25 16:00,2011-10-12 08:00,2011-10-25 16:00,,2011-10-27 08:00,2011-11-16 16:00,,PT_Normal,,,,,/ZmZ9oKnr0mrMyHhgB8ryg,9bHVXVTL/0aPQF6hdJUm1w,,,N,0,0,,,2011-11-01 20:34,2011-11-01 21:11,admin,admin
118,84089,1076,10922,841,1,0,N,N,N,CP_Drtn,TT_Task,DT_FixedDUR2,RV_OK,TK_NotStart,PET-Z1-CC-150,Plain Concrete footings,2104,104,0,120,0,12,12,120,0,0,0,,,,2011-11-17 08:00,2011-12-05 16:00,,2011-10-26 08:00,2011-11-19 16:00,2011-10-26 08:00,2011-11-19 16:00,2011-10-26 08:00,2011-11-19 16:00,,2011-11-17 08:00,2011-12-05 16:00,,PT_Normal,,,,,LfuClUqR70K9XdV5n/Eg1w,Cjqm7hEM30Smwsm9TIWThg,,,N,0,0,,,2011-11-01 20:34,2011-11-01 21:11,admin,admin
119,84090,1076,10922,841,1,0,N,N,N,CP_Drtn,TT_Task,DT_FixedDUR2,RV_OK,TK_NotStart,PET-Z1-CC-160,R.C. footings & tie beams & planting tie beams,2103,104,0,120,0,185,185,120,0,0,0,,,,2011-11-26 08:00,2011-12-13 16:00,,2011-11-03 08:00,2011-11-28 16:00,2011-11-03 08:00,2011-11-28 16:00,2011-11-03 08:00,2011-11-28 16:00,,2011-11-26 08:00,2011-12-13 16:00,,PT_Normal,,,,,OYla04TFjE646cUUn5NYlA,YfOhGsLwDUi+LZKW20xkzg,,,N,0,0,,,2011-11-01 20:34,2011-11-01 21:11,admin,admin
120,84091,1076,10922,841,1,0,N,N,N,CP_Drtn,TT_Task,DT_FixedDUR2,RV_OK,TK_NotStart,PET-Z1-CC-170,Bituminous waterproofing for foundations,,104,0,96,0,0,0,96,0,0,0,,,,2011-12-05 08:00,2011-12-18 16:00,,2011-11-19 08:00,2011-12-03 16:00,2011-11-19 08:00,2011-12-03 16:00,2011-11-19 08:00,2011-12-03 16:00,,2011-12-05 08:00,2011-12-18 16:00,,PT_Normal,,,,,/NcYknHTYE2AWMdglHiw7A,Am45y1gIDEK9yVLNYScl0g,,,N,0,0,,,2011-11-01 20:34,2011-11-01 21:11,admin,admin
121,84092,1076,10922,841,1,0,N,N,N,CP_Drtn,TT_Task,DT_FixedDUR2,RV_OK,TK_NotStart,PET-Z1-CC-220,Steel structure erection(columns & rafters),2118,104,0,160,0,100,100,160,0,0,0,,,,2011-12-31 08:00,2012-01-22 16:00,,2011-12-15 08:00,2012-01-07 16:00,2011-12-15 08:00,2012-01-07 16:00,2011-12-15 08:00,2012-01-07 16:00,,2011-12-31 08:00,2012-01-22 16:00,,PT_Normal,,,,,q3x/qmKQP0OdzVDwU+9MvQ,3O7cWzgq+UGId5uhN7jfWg,,,N,0,0,,,2011-11-01 20:34,2011-11-01 21:11,admin,admin
122,84093,1076,10922,841,1,0,N,N,N,CP_Drtn,TT_Task,DT_FixedDUR2,RV_OK,TK_NotStart,PET-Z1-CC-200,Backfilling under plain concrete,,104,0,104,0,0,0,104,0,0,0,,,,2011-12-19 08:00,2012-01-02 16:00,,2011-12-04 08:00,2011-12-18 16:00,2011-12-04 08:00,2011-12-18 16:00,2011-12-04 08:00,2011-12-18 16:00,,2011-12-19 08:00,2012-01-02 16:00,,PT_Normal,,,,,NhvSW9/9506UyVk28UV69g,j2Im4DSD+0+IRkZhnijEpQ,,,N,0,0,,,2011-11-01 20:34,2011-11-01 21:11,admin,admin
123,84094,1076,10922,841,1,0,N,N,N,CP_Drtn,TT_Task,DT_FixedDUR2,RV_OK,TK_NotStart,PET-Z1-CC-260,Slab On Grade,,104,0,120,0,0,0,120,0,0,0,,,,2012-02-01 08:00,2012-02-18 16:00,,2012-01-17 08:00,2012-02-02 16:00,2012-01-17 08:00,2012-02-02 16:00,2012-01-17 08:00,2012-02-02 16:00,,2012-02-01 08:00,2012-02-18 16:00,,PT_Normal,,,,,v98cGclOUk22QjTOYF4MKQ,mpZVAqlBzEKYmf8fsHMpeg,,,N,0,0,,,2011-11-01 20:34,2011-11-01 21:11,admin,admin
124,84095,1076,10922,841,1,0,N,N,N,CP_Drtn,TT_Task,DT_FixedDUR2,RV_OK,TK_NotStart,PET-Z1-CC-300,Concrete Screed,,104,0,112,0,0,0,112,0,0,0,,,,2012-02-19 08:00,2012-03-05 16:00,,2012-02-04 08:00,2012-02-19 16:00,2012-02-04 08:00,2012-02-19 16:00,2012-02-04 08:00,2012-02-19 16:00,,2012-02-19 08:00,2012-03-05 16:00,,PT_Normal,,,,,4mlsnovuhUyj+htYR0SYJg,cIu6GkUhzEiqmLEM0ORnbA,,,N,0,0,,,2011-11-01 20:34,2011-11-01 21:11,admin,admin
125,84096,1076,10922,841,1,0,N,N,N,CP_Drtn,TT_Task,DT_FixedDUR2,RV_OK,TK_NotStart,PET-Z1-CC-180,RC for pedestals,,136,0,80,0,0,0,80,0,0,0,,,,2011-12-19 08:00,2011-12-29 16:00,,2011-11-29 08:00,2011-12-10 16:00,2011-11-29 08:00,2011-12-10 16:00,2011-11-29 08:00,2011-12-10 16:00,,2011-12-19 08:00,2011-12-29 16:00,,PT_Normal,,,,,Wal9BZfXckC8T5Oy+oLiPw,1zrznmK5F0mqUCTTiGyGtQ,,,N,0,0,,,2011-11-01 20:34,2011-11-01 21:11,admin,admin
126,84097,1076,10922,841,1,0,N,N,N,CP_Drtn,TT_Task,DT_FixedDUR2,RV_OK,TK_NotStart,PET-Z1-CC-230,Plain concrete 50mm thick,,104,0,80,0,0,0,80,0,0,0,,,,2012-01-21 08:00,2012-01-31 16:00,,2012-01-05 08:00,2012-01-16 16:00,2012-01-05 08:00,2012-01-16 16:00,2012-01-05 08:00,2012-01-16 16:00,,2012-01-21 08:00,2012-01-31 16:00,,PT_Normal,,,,,ryfucmx5Ak6XGmUrcTBWrw,JC6SVhJaikeuTpMNyU+y8g,,,N,0,0,,,2011-11-01 20:34,2011-11-01 21:11,admin,admin
127,84098,1076,10922,842,1,0,N,N,N,CP_Drtn,TT_Task,DT_FixedDUR2,RV_OK,TK_NotStart,PET-Z1-CC-280,walk on ceiling installation ( @level 15) area-1,,7,7,296,0,0,0,296,0,0,0,,,,2012-02-18 16:00,2012-04-01 16:00,,2012-02-18 08:00,2012-03-31 17:00,2012-02-18 08:00,2012-03-31 17:00,2012-02-18 08:00,2012-03-31 17:00,,2012-02-18 16:00,2012-04-01 16:00,,PT_Normal,,,,,JpHZhSkUUUWFFWji6X0Aew,,,,N,0,0,,,2011-11-01 20:34,2011-11-01 21:11,admin,admin
128,84099,1076,10922,841,1,0,N,N,N,CP_Drtn,TT_Task,DT_FixedDUR2,RV_OK,TK_NotStart,PET-Z1-CC-310,corrugated sheet (@level 17) area-1,,176,0,80,0,0,0,80,0,0,0,,,,2012-03-03 08:00,2012-03-13 16:00,,2012-02-06 08:00,2012-02-16 16:00,2012-02-06 08:00,2012-02-16 16:00,2012-02-06 08:00,2012-02-16 16:00,,2012-03-03 08:00,2012-03-13 16:00,,PT_Normal,,,,,AWmC+Xmkr0ebZxVOX89qLg,,,,N,0,0,,,2011-11-01 20:34,2011-11-01 21:11,admin,admin
129,84100,1076,10922,841,1,0,N,N,N,CP_Drtn,TT_Task,DT_FixedDUR2,RV_OK,TK_NotStart,PET-Z1-CC-320,RC casting for deck floor (area-1),,176,0,56,0,0,0,56,0,0,0,,,,2012-03-14 08:00,2012-03-21 16:00,,2012-02-18 08:00,2012-02-25 16:00,2012-02-18 08:00,2012-02-25 16:00,2012-02-18 08:00,2012-02-25 16:00,,2012-03-14 08:00,2012-03-21 16:00,,PT_Normal,,,,,4AsSyDmZ4kWAdsc8Hp3OxQ,,,,N,0,0,,,2011-11-01 20:34,2011-11-01 21:11,admin,admin
130,84101,1076,10922,841,1,0,N,N,N,CP_Drtn,TT_Task,DT_FixedDUR2,RV_OK,TK_NotStart,PET-Z1-CC-250,corrugated sheet (@level 16) area-2,,208,0,120,0,0,0,120,0,0,0,,,,2012-02-25 08:00,2012-03-12 16:00,,2012-01-25 08:00,2012-02-11 16:00,2012-01-25 08:00,2012-02-11 16:00,2012-01-25 08:00,2012-02-11 16:00,,2012-02-25 08:00,2012-03-12 16:00,,PT_Normal,,,,,/KNvAg0HJkGWFeks+r08og,,,,N,0,0,,,2011-11-01 20:34,2011-11-01 21:11,admin,admin
131,84102,1076,10922,841,1,0,N,N,N,CP_Drtn,TT_Task,DT_FixedDUR2,RV_OK,TK_NotStart,PET-Z1-CC-350,Steel structure erection(bracings & tie rods),2118,216,0,120,0,30,30,120,0,0,0,,,,2012-02-14 08:00,2012-03-01 16:00,,2012-01-14 08:00,2012-01-30 16:00,2012-01-14 08:00,2012-01-30 16:00,2012-01-14 08:00,2012-01-30 16:00,,2012-02-14 08:00,2012-03-01 16:00,,PT_Normal,,,,,qZew8QvyR0e5F5gJA5UoXA,,,,N,0,0,,,2011-11-01 20:34,2011-11-01 21:11,admin,admin
132,84103,1076,10922,841,1,0,N,N,N,CP_Drtn,TT_Task,DT_FixedDUR2,RV_OK,TK_NotStart,PET-Z1-CC-360,Galvanized steel gutters,,216,0,112,0,0,0,112,0,0,0,,,,2012-03-03 08:00,2012-03-18 16:00,,2012-01-31 08:00,2012-02-15 16:00,2012-01-31 08:00,2012-02-15 16:00,2012-01-31 08:00,2012-02-15 16:00,,2012-03-03 08:00,2012-03-18 16:00,,PT_Normal,,,,,omgt947ucEOqGDHS7ew5HA,,,,N,0,0,,,2011-11-01 20:34,2011-11-01 21:11,admin,admin
133,84104,1076,10922,841,1,0,N,N,N,CP_Drtn,TT_Task,DT_FixedDUR2,RV_OK,TK_NotStart,PET-Z1-CC-270,RC casting for deck floors (area-2),,208,0,56,0,0,0,56,0,0,0,,,,2012-03-13 08:00,2012-03-20 16:00,,2012-02-12 08:00,2012-02-19 16:00,2012-02-12 08:00,2012-02-19 16:00,2012-02-12 08:00,2012-02-19 16:00,,2012-03-13 08:00,2012-03-20 16:00,,PT_Normal,,,,,oBMgMS/K8kaUh/3DcF+hog,,,,N,0,0,,,2011-11-01 20:34,2011-11-01 21:11,admin,admin
134,84105,1076,10922,842,1,0,N,N,N,CP_Drtn,TT_Task,DT_FixedDUR2,RV_OK,TK_NotStart,PET-Z1-CC-290,walk on ceiling installation ( @level 17.2) area-2,,7,7,296,0,0,0,296,0,0,0,,,,2012-02-18 16:00,2012-04-01 16:00,,2012-02-18 08:00,2012-03-31 17:00,2012-02-18 08:00,2012-03-31 17:00,2012-02-18 08:00,2012-03-31 17:00,,2012-02-18 16:00,2012-04-01 16:00,,PT_Normal,,,,,Mio3b5uBWEO9srNZ/RuyzQ,W/8j0RH9FEys56Y7z3MyVg,,,N,0,0,,,2011-11-01 20:34,2011-11-01 21:11,admin,admin
135,84106,1076,10922,841,1,0,N,N,N,CP_Drtn,TT_Task,DT_FixedDUR2,RV_OK,TK_NotStart,PET-Z1-CC-190,Anchors for steel structure,,136,32,80,0,0,0,80,0,0,0,,,,2011-12-19 08:00,2011-12-29 16:00,,2011-11-29 08:00,2011-12-10 16:00,2011-11-29 08:00,2011-12-10 16:00,2011-11-29 08:00,2011-12-10 16:00,,2011-12-19 08:00,2011-12-29 16:00,,PT_Normal,,,,,gsa1nNOseEO5p2fqJq/hFQ,,,,N,0,0,,,2011-11-01 20:34,2011-11-01 21:11,admin,admin
136,84107,1076,10922,841,1,0,N,N,N,CP_Drtn,TT_Task,DT_FixedDUR2,RV_OK,TK_NotStart,PET-Z1-CC-240,Membrane sheet 400 micron,,104,0,80,0,0,0,80,0,0,0,,,,2012-01-21 08:00,2012-01-31 16:00,,2012-01-05 08:00,2012-01-16 16:00,2012-01-05 08:00,2012-01-16 16:00,2012-01-05 08:00,2012-01-16 16:00,,2012-01-21 08:00,2012-01-31 16:00,,PT_Normal,,,,,19Lowjd9EEub8LxmJtZ/Vw,,,,N,0,0,,,2011-11-01 20:34,2011-11-01 21:11,admin,admin
137,84108,1076,10922,841,1,0,N,N,N,CP_Drtn,TT_Task,DT_FixedDUR2,RV_OK,TK_NotStart,PET-Z1-CC-120,Detect underground Utilities,,120,0,96,0,0,0,96,0,0,0,,,,2011-10-16 08:00,2011-10-29 16:00,,2011-09-28 08:00,2011-10-11 16:00,2011-09-28 08:00,2011-10-11 16:00,2011-09-28 08:00,2011-10-11 16:00,,2011-10-16 08:00,2011-10-29 16:00,,PT_Normal,,,,,HgmeHmPgA0Gled4b9lfNmA,,,,N,0,0,,,2011-11-01 20:34,2011-11-01 21:11,admin,admin
138,84109,1076,10922,841,1,0,N,N,N,CP_Drtn,TT_Task,DT_FixedDUR2,RV_OK,TK_NotStart,PET-Z1-CC-140,Utilities diversion,,120,16,144,0,0,0,144,0,0,0,,,,2011-10-30 08:00,2011-11-26 16:00,,2011-10-12 08:00,2011-11-01 16:00,2011-10-12 08:00,2011-11-01 16:00,2011-10-12 08:00,2011-11-01 16:00,,2011-10-30 08:00,2011-11-26 16:00,,PT_Normal,,,,,HUX62nNzYEyRtG0S4r21AQ,,,,N,0,0,,,2011-11-01 20:34,2011-11-01 21:11,admin,admin
139,84110,1076,10922,841,1,0,N,N,N,CP_Drtn,TT_Task,DT_FixedDUR2,RV_OK,TK_NotStart,PET-Z1-CC-210,Concrete beams & columns for masonry,,168,0,240,0,0,0,240,0,0,0,,,,2012-01-02 08:00,2012-02-05 16:00,,2011-12-08 08:00,2012-01-11 16:00,2011-12-08 08:00,2012-01-11 16:00,2011-12-08 08:00,2012-01-11 16:00,,2012-01-02 08:00,2012-02-05 16:00,,PT_Normal,,,,,6JUMGTbrlEG8xUCqZPa1OQ,,,,N,0,0,,,2011-11-01 20:34,2011-11-01 21:11,admin,admin
140,84111,1076,10922,841,1,0,N,N,N,CP_Drtn,TT_Task,DT_FixedDUR2,RV_OK,TK_NotStart,PET-Z1-CC-330,Expansion joint,,160,48,56,0,0,0,56,0,0,0,,,,2012-03-06 08:00,2012-03-13 16:00,,2012-02-12 08:00,2012-02-19 16:00,2012-02-12 08:00,2012-02-19 16:00,2012-02-12 08:00,2012-02-19 16:00,,2012-03-06 08:00,2012-03-13 16:00,,PT_Normal,,,,,HLuWQU5whEqnjKhYqJZ88w,,,,N,0,0,,,2011-11-01 20:34,2011-11-01 21:11,admin,admin
141,84112,1076,10922,841,1,0,N,N,N,CP_Drtn,TT_Task,DT_FixedDUR2,RV_OK,TK_NotStart,PET-Z1-CC-340,Stainless steel pane fixation,,160,48,56,0,0,0,56,0,0,0,,,,2012-03-06 08:00,2012-03-13 16:00,,2012-02-12 08:00,2012-02-19 16:00,2012-02-12 08:00,2012-02-19 16:00,2012-02-12 08:00,2012-02-19 16:00,,2012-03-06 08:00,2012-03-13 16:00,,PT_Normal,,,,,56uur91PFU6ZoQTESa43vw,,,,N,0,0,,,2011-11-01 20:34,2011-11-01 21:11,admin,admin
142,84113,1076,10922,841,1,0,N,N,N,CP_Drtn,TT_Task,DT_FixedDUR2,RV_OK,TK_NotStart,PET-Z1-CC-225,Steel structure erection(purlins & portal frames),2118,104,0,160,0,70,70,160,0,0,0,,,,2012-01-11 08:00,2012-02-02 16:00,,2011-12-27 08:00,2012-01-18 16:00,2011-12-27 08:00,2012-01-18 16:00,2011-12-27 08:00,2012-01-18 16:00,,2012-01-11 08:00,2012-02-02 16:00,,PT_Normal,,,,,iSFE5oS5kUi+llgB2l3c5A,HeE6xW/HQwWE7B51uyI0Dg,,,N,0,0,,,2011-11-01 20:34,2011-11-01 21:11,admin,admin
143,84114,1076,10923,841,1,0,N,N,N,CP_Drtn,TT_Task,DT_FixedDUR2,RV_OK,TK_NotStart,PET-Z1-AR-330,Erection of Roof Sandwich Panel(@level 21.85&22.75),,232,232,56,0,0,0,56,0,0,0,,,,2012-03-25 08:00,2012-04-01 16:00,,2012-02-20 08:00,2012-02-27 16:00,2012-02-20 08:00,2012-02-27 16:00,2012-02-20 08:00,2012-02-27 16:00,,2012-03-25 08:00,2012-04-01 16:00,,PT_Normal,,,,,YMLKavjiHkuDbe8ZAvT5EA,,,,N,0,0,,,2011-11-01 20:34,2011-11-01 21:11,admin,admin
144,84115,1076,10923,841,1,0,N,N,N,CP_Drtn,TT_Task,DT_FixedDUR2,RV_OK,TK_NotStart,PET-Z1-AR-340,Folded steel sheets in pet corners,,216,216,56,0,0,0,56,0,0,0,,,,2012-03-25 08:00,2012-04-01 16:00,,2012-02-22 08:00,2012-02-29 16:00,2012-02-22 08:00,2012-02-29 16:00,2012-02-22 08:00,2012-02-29 16:00,,2012-03-25 08:00,2012-04-01 16:00,,PT_Normal,,,,,sjDAh7X2qEKWx7gvMfe1+A,,,,N,0,0,,,2011-11-01 20:34,2011-11-01 21:11,admin,admin
145,84116,1076,10923,841,1,0,N,N,N,CP_Drtn,TT_Task,DT_FixedDUR2,RV_OK,TK_NotStart,PET-Z1-AR-350,Stainless steel doors erection,,120,120,80,0,0,0,80,0,0,0,,,,2012-03-21 08:00,2012-04-01 16:00,,2012-03-04 08:00,2012-03-14 16:00,2012-03-04 08:00,2012-03-14 16:00,2012-03-04 08:00,2012-03-14 16:00,,2012-03-21 08:00,2012-04-01 16:00,,PT_Normal,,,,,IE9168KLKke6T1tjiVPnDA,,,,N,0,0,,,2011-11-01 20:34,2011-11-01 21:11,admin,admin
146,84117,1076,10923,841,1,0,N,N,N,CP_Drtn,TT_Task,DT_FixedDUR2,RV_OK,TK_NotStart,PET-Z1-AR-300,Roll up shutter doors erection,,40,0,80,0,0,0,80,0,0,0,,,,2012-03-21 08:00,2012-04-01 16:00,,2012-03-15 08:00,2012-03-26 16:00,2012-03-15 08:00,2012-03-26 16:00,2012-03-15 08:00,2012-03-26 16:00,,2012-03-21 08:00,2012-04-01 16:00,,PT_Normal,,,,,tNhTysvNG06CKRlk6i2pRg,,,,N,0,0,,,2011-11-01 20:34,2011-11-01 21:11,admin,admin
147,84118,1076,10923,841,1,0,N,N,N,CP_Drtn,TT_Task,DT_FixedDUR2,RV_OK,TK_NotStart,PET-Z1-AR-200,Polyurethane Flooring,,0,0,120,0,0,0,120,0,0,0,,,,2012-03-15 08:00,2012-04-01 16:00,,2012-03-15 08:00,2012-04-01 16:00,2012-03-15 08:00,2012-04-01 16:00,2012-03-15 08:00,2012-04-01 16:00,,2012-03-15 08:00,2012-04-01 16:00,,PT_Normal,,,,,FWPHxc8UUkuazx0ya7BWQQ,,,,Y,0,0,,,2011-11-01 20:34,2011-11-01 21:11,admin,admin
148,84119,1076,10923,841,1,0,N,N,N,CP_Drtn,TT_Task,DT_FixedDUR2,RV_OK,TK_NotStart,PET-Z1-AR-230,Dismantle Works (doors & windows),,120,16,24,0,0,0,24,0,0,0,,,,2012-03-19 08:00,2012-03-21 16:00,,2012-03-01 08:00,2012-03-04 16:00,2012-03-01 08:00,2012-03-04 16:00,2012-03-01 08:00,2012-03-04 16:00,,2012-03-19 08:00,2012-03-21 16:00,,PT_Normal,,,,,HEtyUlDyFUqGpBjbmkA5WQ,nk6cZ6YC4k2iLZXO4yU53w,,,N,0,0,,,2011-11-01 20:34,2011-11-01 21:11,admin,admin
149,84120,1076,10923,841,1,0,N,N,N,CP_Drtn,TT_Task,DT_FixedDUR2,RV_OK,TK_NotStart,PET-Z1-AR-190,Sandwich Panel For Walls,,112,0,112,0,0,0,112,0,0,0,,,,2012-03-14 08:00,2012-03-29 16:00,,2012-02-27 08:00,2012-03-13 16:00,2012-02-27 08:00,2012-03-13 16:00,2012-02-27 08:00,2012-03-13 16:00,,2012-03-14 08:00,2012-03-29 16:00,,PT_Normal,,,,,uryt4JvKAkC1MJ9Q+G6FPQ,OffvCNVCsEyr8HyLD8rrpA,,,N,0,0,,,2011-11-01 20:34,2011-11-01 21:11,admin,admin
150,84121,1076,10923,841,1,0,N,N,N,CP_Drtn,TT_Task,DT_FixedDUR2,RV_OK,TK_NotStart,PET-Z1-AR-100,Masonry,2108,168,0,240,0,120,120,240,0,0,0,,,,2011-12-26 08:00,2012-01-29 16:00,,2011-12-01 08:00,2012-01-04 16:00,2011-12-01 08:00,2012-01-04 16:00,2011-12-01 08:00,2012-01-04 16:00,,2011-12-26 08:00,2012-01-29 16:00,,PT_Normal,,,,,LbisLwFdJEqe6hGWgH2fqg,K9HYqWP7GEiNw2kt8Snsjw,,,N,0,0,,,2011-11-01 20:34,2011-11-01 21:11,admin,admin
151,84122,1076,10923,841,1,0,N,N,N,CP_Drtn,TT_Task,DT_FixedDUR2,RV_OK,TK_NotStart,PET-Z1-AR-110,Internal Cement Plaster,2107,168,64,200,0,120,120,200,0,0,0,,,,2012-02-06 08:00,2012-03-05 16:00,,2012-01-12 08:00,2012-02-09 16:00,2012-01-12 08:00,2012-02-09 16:00,2012-01-12 08:00,2012-02-09 16:00,,2012-02-06 08:00,2012-03-05 16:00,,PT_Normal,,,,,AkSC5d/QDE+EJYaouV4BEw,SVZaDcDyMkKdh7I9fLW1Ug,,,N,0,0,,,2011-11-01 20:34,2011-11-01 21:11,admin,admin
152,84123,1076,10923,841,1,0,N,N,N,CP_Drtn,TT_Task,DT_FixedDUR2,RV_OK,TK_NotStart,PET-Z1-AR-240,Steel Doors erection,,104,0,80,0,0,0,80,0,0,0,,,,2012-03-19 08:00,2012-03-29 16:00,,2012-03-04 08:00,2012-03-14 16:00,2012-03-04 08:00,2012-03-14 16:00,2012-03-04 08:00,2012-03-14 16:00,,2012-03-19 08:00,2012-03-29 16:00,,PT_Normal,,,,,t3ZdbgxtSkaGGioKr9Mh6g,VEJ1vuTwWk2+O1LEcDfaxw,,,N,0,0,,,2011-11-01 20:34,2011-11-01 21:11,admin,admin
153,84124,1076,10923,841,1,0,N,N,N,CP_Drtn,TT_Task,DT_FixedDUR2,RV_OK,TK_NotStart,PET-Z1-AR-170,Epoxy Paint,2106,104,0,80,0,16,16,80,0,0,0,,,,2012-03-06 08:00,2012-03-17 16:00,,2012-02-20 08:00,2012-03-01 16:00,2012-02-20 08:00,2012-03-01 16:00,2012-02-20 08:00,2012-03-01 16:00,,2012-03-06 08:00,2012-03-17 16:00,,PT_Normal,,,,,kxD5gICsRUuhXx9a/JiPDw,v3RoKZnmLEqpj6ddluFxtw,,,N,0,0,,,2011-11-01 20:34,2011-11-01 21:11,admin,admin
154,84125,1076,10923,841,1,0,N,N,N,CP_Drtn,TT_Task,DT_FixedDUR2,RV_OK,TK_NotStart,PET-Z1-AR-160,External Cement Plaster,2107,416,256,80,0,20,20,80,0,0,0,,,,2012-03-13 08:00,2012-03-24 16:00,,2012-01-12 08:00,2012-01-23 16:00,2012-01-12 08:00,2012-01-23 16:00,2012-01-12 08:00,2012-01-23 16:00,,2012-03-13 08:00,2012-03-24 16:00,,PT_Normal,,,,,M8tzSOVxGE2RAGuCNUcxbA,EU0iKbww5kutwnfneGe6Aw,,,N,0,0,,,2011-11-01 20:34,2011-11-01 21:11,admin,admin
155,84126,1076,10923,841,1,0,N,N,N,CP_Drtn,TT_Task,DT_FixedDUR2,RV_OK,TK_NotStart,PET-Z1-AR-130,Erection of Roof Sandwich Panel(@level 19.5&20.40,,144,0,136,0,0,0,136,0,0,0,,,,2012-02-15 08:00,2012-03-05 16:00,,2012-01-25 08:00,2012-02-13 16:00,2012-01-25 08:00,2012-02-13 16:00,2012-01-25 08:00,2012-02-13 16:00,,2012-02-15 08:00,2012-03-05 16:00,,PT_Normal,,,,,tOXzyPZdD0aH9B9aXO//dQ,NGko0tNVlkO+GM/b8P5SNA,,,N,0,0,,,2011-11-01 20:34,2011-11-01 21:11,admin,admin
156,84127,1076,10923,841,1,0,N,N,N,CP_Drtn,TT_Task,DT_FixedDUR2,RV_OK,TK_NotStart,PET-Z1-AR-140,Epoxy Paint (@level 15) area-2,2106,208,208,80,0,4,4,80,0,0,0,,,,2012-03-21 08:00,2012-04-01 16:00,,2012-02-20 08:00,2012-03-01 16:00,2012-02-20 08:00,2012-03-01 16:00,2012-02-20 08:00,2012-03-01 16:00,,2012-03-21 08:00,2012-04-01 16:00,,PT_Normal,,,,,EzxSHD6rZ0aGurKfNMM7qw,,,,N,0,0,,,2011-11-01 20:34,2011-11-01 21:11,admin,admin
157,84128,1076,10923,841,1,0,N,N,N,CP_Drtn,TT_Task,DT_FixedDUR2,RV_OK,TK_NotStart,PET-Z1-AR-220,Acrylic paint for external plaster,2105,160,160,56,0,12,12,56,0,0,0,,,,2012-03-25 08:00,2012-04-01 16:00,,2012-03-01 08:00,2012-03-08 16:00,2012-03-01 08:00,2012-03-08 16:00,2012-03-01 08:00,2012-03-08 16:00,,2012-03-25 08:00,2012-04-01 16:00,,PT_Normal,,,,,+N1pi+5dFk6bIJpCsJvXZQ,,,,N,0,0,,,2011-11-01 20:34,2011-11-01 21:11,admin,admin
158,84129,1076,10923,841,1,0,N,N,N,CP_Drtn,TT_Task,DT_FixedDUR2,RV_OK,TK_NotStart,PET-Z1-AR-180,Epoxy Paint (@level 17.8) area-1,2106,176,176,72,0,20,20,72,0,0,0,,,,2012-03-22 08:00,2012-04-01 16:00,,2012-02-26 08:00,2012-03-06 16:00,2012-02-26 08:00,2012-03-06 16:00,2012-02-26 08:00,2012-03-06 16:00,,2012-03-22 08:00,2012-04-01 16:00,,PT_Normal,,,,,N8dzy4lUC0WPNZB8htNaiQ,Hdfusjx5TEGeZsTQP+Cw1g,,,N,0,0,,,2011-11-01 20:34,2011-11-01 21:11,admin,admin
159,84130,1076,10923,841,1,0,N,N,N,CP_Drtn,TT_Task,DT_FixedDUR2,RV_OK,TK_NotStart,PET-Z1-AR-310,Corrugated sheet paintings(area1),,192,16,80,0,0,0,80,0,0,0,,,,2012-03-11 08:00,2012-03-21 16:00,,2012-02-12 08:00,2012-02-22 16:00,2012-02-12 08:00,2012-02-22 16:00,2012-02-12 08:00,2012-02-22 16:00,,2012-03-11 08:00,2012-03-21 16:00,,PT_Normal,,,,,t0ZlltjdtkaQgoSbLVBJUA,,,,N,0,0,,,2011-11-01 20:34,2011-11-01 21:11,admin,admin
160,84131,1076,10923,841,1,0,N,N,N,CP_Drtn,TT_Task,DT_FixedDUR2,RV_OK,TK_NotStart,PET-Z1-AR-320,Corrugated sheet paintings(area2),,208,0,80,0,0,0,80,0,0,0,,,,2012-03-01 08:00,2012-03-12 16:00,,2012-01-31 08:00,2012-02-11 16:00,2012-01-31 08:00,2012-02-11 16:00,2012-01-31 08:00,2012-02-11 16:00,,2012-03-01 08:00,2012-03-12 16:00,,PT_Normal,,,,,kaXo6yPlAkihXTc/CcJOCA,,,,N,0,0,,,2011-11-01 20:34,2011-11-01 21:11,admin,admin
161,84132,1076,10923,841,1,0,N,N,N,CP_Drtn,TT_Task,DT_FixedDUR2,RV_OK,TK_NotStart,PET-Z1-AR-150,Fair face conc. guard base(kerb),,112,0,120,0,0,0,120,0,0,0,,,,2012-02-26 08:00,2012-03-13 16:00,,2012-02-09 08:00,2012-02-26 16:00,2012-02-09 08:00,2012-02-26 16:00,2012-02-09 08:00,2012-02-26 16:00,,2012-02-26 08:00,2012-03-13 16:00,,PT_Normal,,,,,BP7pmOPn1U+faUAgM0DNdQ,,,,N,0,0,,,2011-11-01 20:34,2011-11-01 21:11,admin,admin
162,84133,1076,10923,841,1,0,N,N,N,CP_Drtn,TT_Task,DT_FixedDUR2,RV_OK,TK_NotStart,PET-Z1-AR-280,Final touch up,,104,64,24,0,0,0,24,0,0,0,,,,2012-03-27 08:00,2012-03-29 16:00,,2012-03-12 08:00,2012-03-14 16:00,2012-03-12 08:00,2012-03-14 16:00,2012-03-12 08:00,2012-03-14 16:00,,2012-03-27 08:00,2012-03-29 16:00,,PT_Normal,,,,,aY1fENyBcEWySWYWodxpaQ,,,,N,0,0,,,2011-11-01 20:34,2011-11-01 21:11,admin,admin
163,84134,1076,10923,841,1,0,N,N,N,CP_Drtn,TT_Task,DT_FixedDUR2,RV_OK,TK_NotStart,PET-Z1-AR-290,Handing over & comissioning,,40,8,32,0,0,0,32,0,0,0,,,,2012-03-28 08:00,2012-04-01 16:00,,2012-03-22 08:00,2012-03-26 16:00,2012-03-22 08:00,2012-03-26 16:00,2012-03-22 08:00,2012-03-26 16:00,,2012-03-28 08:00,2012-04-01 16:00,,PT_Normal,,,,,7yumDG/SNE6Y3M0FSa9lmg,,,,N,0,0,,,2011-11-01 20:34,2011-11-01 21:11,admin,admin
164,84135,1076,10923,841,1,0,N,N,N,CP_Drtn,TT_Task,DT_FixedDUR2,RV_OK,TK_NotStart,PET-Z1-AR-250,Louvers erection,,128,128,80,0,0,0,80,0,0,0,,,,2012-03-21 08:00,2012-04-01 16:00,,2012-03-03 08:00,2012-03-13 16:00,2012-03-03 08:00,2012-03-13 16:00,2012-03-03 08:00,2012-03-13 16:00,,2012-03-21 08:00,2012-04-01 16:00,,PT_Normal,,,,,YHwvADMBd0+9wZQJFmbvHw,JqDJGf9oOEeYVvR5RLbg1g,,,N,0,0,,,2011-11-01 20:34,2011-11-01 21:11,admin,admin
165,84136,1076,10923,841,1,0,N,N,N,CP_Drtn,TT_Task,DT_FixedDUR2,RV_OK,TK_NotStart,PET-Z1-AR-260,Windows erection,,80,80,80,0,0,0,80,0,0,0,,,,2012-03-21 08:00,2012-04-01 16:00,,2012-03-10 08:00,2012-03-20 16:00,2012-03-10 08:00,2012-03-20 16:00,2012-03-10 08:00,2012-03-20 16:00,,2012-03-21 08:00,2012-04-01 16:00,,PT_Normal,,,,,rHT13A9+8EuXkn0AcMj9LQ,ZKeZk6dzcE6TuFyYuw0aXw,,,N,0,0,,,2011-11-01 20:34,2011-11-01 21:11,admin,admin
166,84137,1076,10923,841,1,0,N,N,N,CP_Drtn,TT_Task,DT_FixedDUR2,RV_OK,TK_NotStart,PET-Z1-AR-270,Erection of Steel ladder & handrail & cheker plates& painting,,256,256,80,0,0,0,80,0,0,0,,,,2012-03-21 08:00,2012-04-01 16:00,,2012-02-13 08:00,2012-02-23 16:00,2012-02-13 08:00,2012-02-23 16:00,2012-02-13 08:00,2012-02-23 16:00,,2012-03-21 08:00,2012-04-01 16:00,,PT_Normal,,,,,y00QYY5p9E+l1p4H6uBo3A,byFoe6Be20ydjmst+mmm7Q,,,N,0,0,,,2011-11-01 20:34,2011-11-01 21:11,admin,admin
167,84138,1076,10923,841,1,0,N,N,N,CP_Drtn,TT_Task,DT_FixedDUR2,RV_OK,TK_NotStart,PET-Z1-AR-120,Steel structure paintings,,224,224,240,0,0,0,240,0,0,0,,,,2012-02-27 08:00,2012-04-01 16:00,,2012-01-25 08:00,2012-02-28 16:00,2012-01-25 08:00,2012-02-28 16:00,2012-01-25 08:00,2012-02-28 16:00,,2012-02-27 08:00,2012-04-01 16:00,,PT_Normal,,,,,wNRcYkxN/0eq1iOKbX4uaw,,,,N,0,0,,,2011-11-01 20:34,2011-11-01 21:11,admin,admin
168,84139,1076,10923,841,1,0,N,N,N,CP_Drtn,TT_Task,DT_FixedDUR2,RV_OK,TK_NotStart,PET-Z1-AR-210,Guard bollard erection,,280,240,56,0,0,0,56,0,0,0,,,,2012-03-20 08:00,2012-03-27 16:00,,2012-02-08 08:00,2012-02-15 16:00,2012-02-08 08:00,2012-02-15 16:00,2012-02-08 08:00,2012-02-15 16:00,,2012-03-20 08:00,2012-03-27 16:00,,PT_Normal,,,,,FXzpMVPC20KAnSUInmMgIg,,,,N,0,0,,,2011-11-01 20:34,2011-11-01 21:11,admin,admin
169,84140,1076,10925,841,1,0,N,N,N,CP_Drtn,TT_Task,DT_FixedDUR2,RV_OK,TK_NotStart,PET-Z2-AR-280,Erection of Roof Sandwich Panel(@level 21.85&22.75),,152,152,56,0,0,0,56,0,0,0,,,,2012-03-25 08:00,2012-04-01 16:00,,2012-03-03 08:00,2012-03-10 16:00,2012-03-03 08:00,2012-03-10 16:00,2012-03-03 08:00,2012-03-10 16:00,,2012-03-25 08:00,2012-04-01 16:00,,PT_Normal,,,,,wOwGdIi9bkeOCCQHf4a16Q,,,,N,0,0,,,2011-11-01 20:34,2011-11-01 21:11,admin,admin
170,84141,1076,10925,841,1,0,N,N,N,CP_Drtn,TT_Task,DT_FixedDUR2,RV_OK,TK_NotStart,PET-Z2-AR-290,Piping for drainage system(between old&new pet building),,176,0,80,0,0,0,80,0,0,0,,,,2012-02-15 08:00,2012-02-26 16:00,,2012-01-21 08:00,2012-01-31 16:00,2012-01-21 08:00,2012-01-31 16:00,2012-01-21 08:00,2012-01-31 16:00,,2012-02-15 08:00,2012-02-26 16:00,,PT_Normal,,,,,iEEI9APDMUeHrg5nbvdhcA,,,,N,0,0,,,2011-11-01 20:34,2011-11-01 21:11,admin,admin
171,84142,1076,10925,841,1,0,N,N,N,CP_Drtn,TT_Task,DT_FixedDUR2,RV_OK,TK_NotStart,PET-Z2-AR-300,Floor clean-outs,,176,72,40,0,0,0,40,0,0,0,,,,2012-02-27 08:00,2012-03-03 16:00,,2012-02-01 08:00,2012-02-06 16:00,2012-02-01 08:00,2012-02-06 16:00,2012-02-01 08:00,2012-02-06 16:00,,2012-02-27 08:00,2012-03-03 16:00,,PT_Normal,,,,,EPM2iaoEpEyE0rafyRkH2Q,,,,N,0,0,,,2011-11-01 20:34,2011-11-01 21:11,admin,admin
172,84143,1076,10925,841,1,0,N,N,N,CP_Drtn,TT_Task,DT_FixedDUR2,RV_OK,TK_NotStart,PET-Z2-AR-310,Stainless steel doors erection,,152,48,80,0,0,0,80,0,0,0,,,,2012-03-19 08:00,2012-03-29 16:00,,2012-02-26 08:00,2012-03-07 16:00,2012-02-26 08:00,2012-03-07 16:00,2012-02-26 08:00,2012-03-07 16:00,,2012-03-19 08:00,2012-03-29 16:00,,PT_Normal,,,,,I4OM00I44kWnVCapFTT48A,,,,N,0,0,,,2011-11-01 20:34,2011-11-01 21:11,admin,admin
173,84144,1076,10925,841,1,0,N,N,N,CP_Drtn,TT_Task,DT_FixedDUR2,RV_OK,TK_NotStart,PET-Z2-AR-320,Roll up shutter doors erection,,32,0,80,0,0,0,80,0,0,0,,,,2012-03-12 08:00,2012-03-22 16:00,,2012-03-07 08:00,2012-03-18 16:00,2012-03-07 08:00,2012-03-18 16:00,2012-03-07 08:00,2012-03-18 16:00,,2012-03-12 08:00,2012-03-22 16:00,,PT_Normal,,,,,1zSHUsHmGUGNZfvHm0tBxg,,,,N,0,0,,,2011-11-01 20:34,2011-11-01 21:11,admin,admin
174,84145,1076,10925,841,1,0,N,N,N,CP_Drtn,TT_Task,DT_FixedDUR2,RV_OK,TK_NotStart,PET-Z2-AR-330,Galvanized steel flashing&pur foam,,112,96,80,0,0,0,80,0,0,0,,,,2012-03-21 08:00,2012-04-01 16:00,,2012-03-05 08:00,2012-03-15 16:00,2012-03-05 08:00,2012-03-15 16:00,2012-03-05 08:00,2012-03-15 16:00,,2012-03-21 08:00,2012-04-01 16:00,,PT_Normal,,,,,hzEIqAty7Ue1ftml+AYHzQ,,,,N,0,0,,,2011-11-01 20:34,2011-11-01 21:11,admin,admin
175,84146,1076,10925,841,1,0,N,N,N,CP_Drtn,TT_Task,DT_FixedDUR2,RV_OK,TK_NotStart,PET-Z2-AR-270,Dismantle sandwich panels& rain gutter,,112,80,24,0,0,0,24,0,0,0,,,,2012-03-24 08:00,2012-03-26 16:00,,2012-03-07 08:00,2012-03-10 16:00,2012-03-07 08:00,2012-03-10 16:00,2012-03-07 08:00,2012-03-10 16:00,,2012-03-24 08:00,2012-03-26 16:00,,PT_Normal,,,,,ptonTBSJXECEk+/BnnRT9Q,,,,N,0,0,,,2011-11-01 20:34,2011-11-01 21:11,admin,admin
176,84147,1076,10925,841,1,0,N,N,N,CP_Drtn,TT_Task,DT_FixedDUR2,RV_OK,TK_NotStart,PET-Z2-AR-190,Dismantle Works (doors & windows),,112,0,24,0,0,0,24,0,0,0,,,,2012-03-20 08:00,2012-03-22 16:00,,2012-03-04 08:00,2012-03-06 16:00,2012-03-04 08:00,2012-03-06 16:00,2012-03-04 08:00,2012-03-06 16:00,,2012-03-20 08:00,2012-03-22 16:00,,PT_Normal,,,,,DAud8FWq7EOO+9zkpAJu1g,Te7T52zcp0++MK3LV1guww,,,N,0,0,,,2011-11-01 20:34,2011-11-01 21:11,admin,admin
177,84148,1076,10925,841,1,0,N,N,N,CP_Drtn,TT_Task,DT_FixedDUR2,RV_OK,TK_NotStart,PET-Z2-AR-150,Sandwich Panel For Walls,,104,0,120,0,0,0,120,0,0,0,,,,2012-03-12 08:00,2012-03-28 16:00,,2012-02-26 08:00,2012-03-13 16:00,2012-02-26 08:00,2012-03-13 16:00,2012-02-26 08:00,2012-03-13 16:00,,2012-03-12 08:00,2012-03-28 16:00,,PT_Normal,,,,,FK5O/QBQYEuxdKSFjngDEQ,+3StPaSLHkOtWSUB+w7wYA,,,N,0,0,,,2011-11-01 20:34,2011-11-01 21:11,admin,admin
178,84149,1076,10925,841,1,0,N,N,N,CP_Drtn,TT_Task,DT_FixedDUR2,RV_OK,TK_NotStart,PET-Z2-AR-100,Masonry,2108,128,0,240,0,120,120,240,0,0,0,,,,2011-12-26 08:00,2012-01-29 16:00,,2011-12-07 08:00,2012-01-10 16:00,2011-12-07 08:00,2012-01-10 16:00,2011-12-07 08:00,2012-01-10 16:00,,2011-12-26 08:00,2012-01-29 16:00,,PT_Normal,,,,,ofazN7sfoUmlbzK/fQRaGw,9PhId843hEyLB+qXjiNr5w,,,N,0,0,,,2011-11-01 20:34,2011-11-01 21:11,admin,admin
179,84150,1076,10925,841,1,0,N,N,N,CP_Drtn,TT_Task,DT_FixedDUR2,RV_OK,TK_NotStart,PET-Z2-AR-110,Internal Cement Plaster,2107,128,24,240,0,120,120,240,0,0,0,,,,2012-02-06 08:00,2012-03-11 16:00,,2012-01-18 08:00,2012-02-21 16:00,2012-01-18 08:00,2012-02-21 16:00,2012-01-18 08:00,2012-02-21 16:00,,2012-02-06 08:00,2012-03-11 16:00,,PT_Normal,,,,,8yX6IoBQl0OyJaVeh4yv2w,1BvZ/l2lXU66fAyjOkHTNg,,,N,0,0,,,2011-11-01 20:34,2011-11-01 21:11,admin,admin
180,84151,1076,10925,841,1,0,N,N,N,CP_Drtn,TT_Task,DT_FixedDUR2,RV_OK,TK_NotStart,PET-Z2-AR-200,Steel Doors erection,,104,0,80,0,0,0,80,0,0,0,,,,2012-03-19 08:00,2012-03-29 16:00,,2012-03-04 08:00,2012-03-14 16:00,2012-03-04 08:00,2012-03-14 16:00,2012-03-04 08:00,2012-03-14 16:00,,2012-03-19 08:00,2012-03-29 16:00,,PT_Normal,,,,,depr3kBa0k20HyUq1B//2w,QYKXBPsHOUajUxp/raVuWw,,,N,0,0,,,2011-11-01 20:34,2011-11-01 21:11,admin,admin
181,84152,1076,10925,841,1,0,N,N,N,CP_Drtn,TT_Task,DT_FixedDUR2,RV_OK,TK_NotStart,PET-Z2-AR-160,Epoxy Paint,2106,104,0,80,0,16,16,80,0,0,0,,,,2012-03-12 08:00,2012-03-22 16:00,,2012-02-26 08:00,2012-03-07 16:00,2012-02-26 08:00,2012-03-07 16:00,2012-02-26 08:00,2012-03-07 16:00,,2012-03-12 08:00,2012-03-22 16:00,,PT_Normal,,,,,XBGlmYhbSUOVwC6rfvKfsQ,xNjsddbYFUKRYyODpldwvg,,,N,0,0,,,2011-11-01 20:34,2011-11-01 21:11,admin,admin
182,84153,1076,10925,841,1,0,N,N,N,CP_Drtn,TT_Task,DT_FixedDUR2,RV_OK,TK_NotStart,PET-Z2-AR-170,External Cement Plaster,2107,392,264,80,0,20,20,80,0,0,0,,,,2012-03-15 08:00,2012-03-26 16:00,,2012-01-18 08:00,2012-01-29 16:00,2012-01-18 08:00,2012-01-29 16:00,2012-01-18 08:00,2012-01-29 16:00,,2012-03-15 08:00,2012-03-26 16:00,,PT_Normal,,,,,0Om5SJS6vU+J4Rk/WsZVZw,dG5rWdvO40y7yMg9wqjAdg,,,N,0,0,,,2011-11-01 20:34,2011-11-01 21:11,admin,admin
183,84154,1076,10925,841,1,0,N,N,N,CP_Drtn,TT_Task,DT_FixedDUR2,RV_OK,TK_NotStart,PET-Z2-AR-120,Erection of Roof Sandwich Panel(@level 19.5&20.40),,112,0,240,0,0,0,240,0,0,0,,,,2012-02-15 08:00,2012-03-20 16:00,,2012-01-30 08:00,2012-03-04 16:00,2012-01-30 08:00,2012-03-04 16:00,2012-01-30 08:00,2012-03-04 16:00,,2012-02-15 08:00,2012-03-20 16:00,,PT_Normal,,,,,fLWrNHmtBky1bNY2SSx+9Q,,,,N,0,0,,,2011-11-01 20:34,2011-11-01 21:11,admin,admin
184,84155,1076,10925,841,1,0,N,N,N,CP_Drtn,TT_Task,DT_FixedDUR2,RV_OK,TK_NotStart,PET-Z2-AR-240,Acrylic paint for external plaster,2105,128,128,40,0,16,16,40,0,0,0,,,,2012-03-27 08:00,2012-04-01 16:00,,2012-03-08 08:00,2012-03-13 16:00,2012-03-08 08:00,2012-03-13 16:00,2012-03-08 08:00,2012-03-13 16:00,,2012-03-27 08:00,2012-04-01 16:00,,PT_Normal,,,,,6D+3SdF9B0iv5x0cPLM+UQ,+BgAPdB5GECVv43y2XqZJw,,,N,0,0,,,2011-11-01 20:34,2011-11-01 21:11,admin,admin
185,84156,1076,10925,841,1,0,N,N,N,CP_Drtn,TT_Task,DT_FixedDUR2,RV_OK,TK_NotStart,PET-Z2-AR-140,Fair face conc. guard base(kerb),,104,0,120,0,0,0,120,0,0,0,,,,2012-02-23 08:00,2012-03-11 16:00,,2012-02-08 08:00,2012-02-25 16:00,2012-02-08 08:00,2012-02-25 16:00,2012-02-08 08:00,2012-02-25 16:00,,2012-02-23 08:00,2012-03-11 16:00,,PT_Normal,,,,,bMx3eXpqoUmdGetufwHeWw,,,,N,0,0,,,2011-11-01 20:34,2011-11-01 21:11,admin,admin
186,84157,1076,10925,841,1,0,N,N,N,CP_Drtn,TT_Task,DT_FixedDUR2,RV_OK,TK_NotStart,PET-Z2-AR-260,Handing over & comissioning,,32,0,40,0,0,0,40,0,0,0,,,,2012-03-27 08:00,2012-04-01 16:00,,2012-03-22 08:00,2012-03-27 16:00,2012-03-22 08:00,2012-03-27 16:00,2012-03-22 08:00,2012-03-27 16:00,,2012-03-27 08:00,2012-04-01 16:00,,PT_Normal,,,,,moVvbf4RjUGfAY0maRjIag,,,,N,0,0,,,2011-11-01 20:34,2011-11-01 21:11,admin,admin
187,84158,1076,10925,841,1,0,N,N,N,CP_Drtn,TT_Task,DT_FixedDUR2,RV_OK,TK_NotStart,PET-Z2-AR-250,Final touch up,,32,0,24,0,0,0,24,0,0,0,,,,2012-03-24 08:00,2012-03-26 16:00,,2012-03-19 08:00,2012-03-21 16:00,2012-03-19 08:00,2012-03-21 16:00,2012-03-19 08:00,2012-03-21 16:00,,2012-03-24 08:00,2012-03-26 16:00,,PT_Normal,,,,,YWtN/3uaS02XpzZMTAVCXw,,,,N,0,0,,,2011-11-01 20:34,2011-11-01 21:11,admin,admin
188,84159,1076,10925,841,1,0,N,N,N,CP_Drtn,TT_Task,DT_FixedDUR2,RV_OK,TK_NotStart,PET-Z2-AR-210,Louvers erection,,120,120,80,0,0,0,80,0,0,0,,,,2012-03-21 08:00,2012-04-01 16:00,,2012-03-04 08:00,2012-03-14 16:00,2012-03-04 08:00,2012-03-14 16:00,2012-03-04 08:00,2012-03-14 16:00,,2012-03-21 08:00,2012-04-01 16:00,,PT_Normal,,,,,/j9QiYA6zEOBTaofXmutdg,,,,N,0,0,,,2011-11-01 20:34,2011-11-01 21:11,admin,admin
189,84160,1076,10925,841,1,0,N,N,N,CP_Drtn,TT_Task,DT_FixedDUR2,RV_OK,TK_NotStart,PET-Z2-AR-220,Windows erection,,80,80,80,0,0,0,80,0,0,0,,,,2012-03-21 08:00,2012-04-01 16:00,,2012-03-10 08:00,2012-03-20 16:00,2012-03-10 08:00,2012-03-20 16:00,2012-03-10 08:00,2012-03-20 16:00,,2012-03-21 08:00,2012-04-01 16:00,,PT_Normal,,,,,Ms4lHlKEOUWrsP5ZLbf2lQ,,,,N,0,0,,,2011-11-01 20:34,2011-11-01 21:11,admin,admin
190,84161,1076,10925,841,1,0,N,N,N,CP_Drtn,TT_Task,DT_FixedDUR2,RV_OK,TK_NotStart,PET-Z2-AR-130,Steel structure paintings,,152,0,240,0,0,0,240,0,0,0,,,,2012-02-19 08:00,2012-03-24 16:00,,2012-01-28 08:00,2012-03-01 16:00,2012-01-28 08:00,2012-03-01 16:00,2012-01-28 08:00,2012-03-01 16:00,,2012-02-19 08:00,2012-03-24 16:00,,PT_Normal,,,,,gZiBtPGAAkq3IrxDoLUFMw,,,,N,0,0,,,2011-11-01 20:34,2011-11-01 21:11,admin,admin
191,84162,1076,10925,841,1,0,N,N,N,CP_Drtn,TT_Task,DT_FixedDUR2,RV_OK,TK_NotStart,PET-Z2-AR-180,Guard bollard erection,,272,240,56,0,0,0,56,0,0,0,,,,2012-03-19 08:00,2012-03-26 16:00,,2012-02-08 08:00,2012-02-15 16:00,2012-02-08 08:00,2012-02-15 16:00,2012-02-08 08:00,2012-02-15 16:00,,2012-03-19 08:00,2012-03-26 16:00,,PT_Normal,,,,,qCvg99SdPEmAQXQ2+W7JTg,,,,N,0,0,,,2011-11-01 20:34,2011-11-01 21:11,admin,admin
192,84163,1076,10926,841,1,0,N,N,N,CP_Drtn,TT_Task,DT_FixedDUR2,RV_OK,TK_NotStart,PET-Z2-CC-235,Columns & rafters (@level 21.85&22.75),,112,0,56,0,0,0,56,0,0,0,,,,2012-02-07 08:00,2012-02-14 16:00,,2012-01-22 08:00,2012-01-29 16:00,2012-01-22 08:00,2012-01-29 16:00,2012-01-22 08:00,2012-01-29 16:00,,2012-02-07 08:00,2012-02-14 16:00,,PT_Normal,,,,,avcM+e9Kv0WH9851BysvqQ,,,,N,0,0,,,2011-11-01 20:34,2011-11-01 21:11,admin,admin
193,84164,1076,10926,841,1,0,N,N,N,CP_Drtn,TT_Task,DT_FixedDUR2,RV_OK,TK_NotStart,PET-Z2-CC-290,Steel structure erection(bracings & tie rods),2118,224,120,120,0,30,30,120,0,0,0,,,,2012-02-23 08:00,2012-03-11 16:00,,2012-01-22 08:00,2012-02-07 16:00,2012-01-22 08:00,2012-02-07 16:00,2012-01-22 08:00,2012-02-07 16:00,,2012-02-23 08:00,2012-03-11 16:00,,PT_Normal,,,,,f+9TPpc7p0GEgVhpK4ESiw,,,,N,0,0,,,2011-11-01 20:34,2011-11-01 21:11,admin,admin
194,84165,1076,10926,841,1,0,N,N,N,CP_Drtn,TT_Task,DT_FixedDUR2,RV_OK,TK_NotStart,PET-Z2-CC-100,Demolishing Of Existing Concrete,,112,0,24,0,0,0,24,0,0,0,,,,2011-10-17 08:00,2011-10-19 16:00,,2011-10-01 08:00,2011-10-03 16:00,2011-10-01 08:00,2011-10-03 16:00,2011-10-01 08:00,2011-10-03 16:00,,2011-10-17 08:00,2011-10-19 16:00,,PT_Normal,,,,,FAdJhHBcgkycUIkEwA+RwQ,lVdCsxJtSECx+NyOdXGwyA,,,N,0,0,,,2011-11-01 20:34,2011-11-01 21:11,admin,admin
195,84166,1076,10926,841,1,0,N,N,N,CP_Drtn,TT_Task,DT_FixedDUR2,RV_OK,TK_NotStart,PET-Z2-CC-110,Excavation,,112,0,96,0,0,0,96,0,0,0,,,,2011-10-20 08:00,2011-11-02 16:00,,2011-10-04 08:00,2011-10-17 16:00,2011-10-04 08:00,2011-10-17 16:00,2011-10-04 08:00,2011-10-17 16:00,,2011-10-20 08:00,2011-11-02 16:00,,PT_Normal,,,,,SBQd9In9qE+ESagcK0OUiA,QRUsee8KtEOOppZIwEDmpA,,,N,0,0,,,2011-11-01 20:34,2011-11-01 21:11,admin,admin
196,84167,1076,10926,841,1,0,N,N,N,CP_Drtn,TT_Task,DT_FixedDUR2,RV_OK,TK_NotStart,PET-Z2-CC-130,Replacement Under Footings,,112,0,96,0,0,0,96,0,0,0,,,,2011-11-03 08:00,2011-11-23 16:00,,2011-10-18 08:00,2011-10-31 16:00,2011-10-18 08:00,2011-10-31 16:00,2011-10-18 08:00,2011-10-31 16:00,,2011-11-03 08:00,2011-11-23 16:00,,PT_Normal,,,,,DVdSghNSAEOr7LT97RUkNA,eoilmfaoLEKNxI0neTli5Q,,,N,0,0,,,2011-11-01 20:34,2011-11-01 21:11,admin,admin
197,84168,1076,10926,841,1,0,N,N,N,CP_Drtn,TT_Task,DT_FixedDUR2,RV_OK,TK_NotStart,PET-Z2-CC-150,Plain Concrete footings,2104,112,0,80,0,12,12,80,0,0,0,,,,2011-11-24 08:00,2011-12-06 16:00,,2011-11-01 08:00,2011-11-19 16:00,2011-11-01 08:00,2011-11-19 16:00,2011-11-01 08:00,2011-11-19 16:00,,2011-11-24 08:00,2011-12-06 16:00,,PT_Normal,,,,,XXQrPHgIqkOHtuFQbosEPA,5YIA18cGaUuRiz10mjnkkQ,,,N,0,0,,,2011-11-01 20:34,2011-11-01 21:11,admin,admin
198,84169,1076,10926,841,1,0,N,N,N,CP_Drtn,TT_Task,DT_FixedDUR2,RV_OK,TK_NotStart,PET-Z2-CC-160,R.C. footings & tie beams &planting tie beams,2104,112,0,120,0,185,185,120,0,0,0,,,,2011-12-04 08:00,2011-12-20 16:00,,2011-11-16 08:00,2011-12-04 16:00,2011-11-16 08:00,2011-12-04 16:00,2011-11-16 08:00,2011-12-04 16:00,,2011-12-04 08:00,2011-12-20 16:00,,PT_Normal,,,,,+s/qESgcRkO+OBy8rXOWSQ,wa6WUAxUu0extTooVW3Kfg,,,N,0,0,,,2011-11-01 20:34,2011-11-01 21:11,admin,admin
199,84170,1076,10926,841,1,0,N,N,N,CP_Drtn,TT_Task,DT_FixedDUR2,RV_OK,TK_NotStart,PET-Z2-CC-170,Bituminous waterproofing for foundations,,112,0,80,0,0,0,80,0,0,0,,,,2011-12-12 08:00,2011-12-22 16:00,,2011-11-24 08:00,2011-12-06 16:00,2011-11-24 08:00,2011-12-06 16:00,2011-11-24 08:00,2011-12-06 16:00,,2011-12-12 08:00,2011-12-22 16:00,,PT_Normal,,,,,0h9OmjbSwE+6bPVLa90vUw,YI+ANGE/jUuQxgTw7kfnZA,,,N,0,0,,,2011-11-01 20:34,2011-11-01 21:11,admin,admin
200,84171,1076,10926,841,1,0,N,N,N,CP_Drtn,TT_Task,DT_FixedDUR2,RV_OK,TK_NotStart,PET-Z2-CC-220,Steel structure erection(columns & rafters),2118,112,8,160,0,100,100,160,0,0,0,,,,2012-01-02 08:00,2012-01-24 16:00,,2011-12-17 08:00,2012-01-08 16:00,2011-12-17 08:00,2012-01-08 16:00,2011-12-17 08:00,2012-01-08 16:00,,2012-01-02 08:00,2012-01-24 16:00,,PT_Normal,,,,,yhUlk3qFjUW8LeNlrj86FA,oI/+HulBMUCqedQEBMoQPw,,,N,0,0,,,2011-11-01 20:34,2011-11-01 21:11,admin,admin
201,84172,1076,10926,841,1,0,N,N,N,CP_Drtn,TT_Task,DT_FixedDUR2,RV_OK,TK_NotStart,PET-Z2-CC-190,Backfilling under plain concrete,,112,0,80,0,0,0,80,0,0,0,,,,2011-12-24 08:00,2012-01-03 16:00,,2011-12-07 08:00,2011-12-18 16:00,2011-12-07 08:00,2011-12-18 16:00,2011-12-07 08:00,2011-12-18 16:00,,2011-12-24 08:00,2012-01-03 16:00,,PT_Normal,,,,,eBkCrp/mnEO4WJTP7T000w,HzfXh1d0a0qG8YubyfOiTQ,,,N,0,0,,,2011-11-01 20:34,2011-11-01 21:11,admin,admin
202,84173,1076,10926,841,1,0,N,N,N,CP_Drtn,TT_Task,DT_FixedDUR2,RV_OK,TK_NotStart,PET-Z2-CC-250,Slab On Grade,,104,0,120,0,0,0,120,0,0,0,,,,2012-02-06 08:00,2012-02-22 16:00,,2012-01-22 08:00,2012-02-07 16:00,2012-01-22 08:00,2012-02-07 16:00,2012-01-22 08:00,2012-02-07 16:00,,2012-02-06 08:00,2012-02-22 16:00,,PT_Normal,,,,,5vR4A5Xuek+kMF9n4woh/A,x4jGlTe66UizPyxg35xOgg,,,N,0,0,,,2011-11-01 20:34,2011-11-01 21:11,admin,admin
203,84174,1076,10926,841,1,0,N,N,N,CP_Drtn,TT_Task,DT_FixedDUR2,RV_OK,TK_NotStart,PET-Z2-CC-260,Plain Concrete Screed,,104,0,200,0,0,0,200,0,0,0,,,,2012-02-12 08:00,2012-03-11 16:00,,2012-01-28 08:00,2012-02-25 16:00,2012-01-28 08:00,2012-02-25 16:00,2012-01-28 08:00,2012-02-25 16:00,,2012-02-12 08:00,2012-03-11 16:00,,PT_Normal,,,,,a1WvPZyyPUO1uCHB43rDLQ,CuUH5Tx5y0WYB4bgDxsYvA,,,N,0,0,,,2011-11-01 20:34,2011-11-01 21:11,admin,admin
204,84175,1076,10926,841,1,0,N,N,N,CP_Drtn,TT_Task,DT_FixedDUR2,RV_OK,TK_NotStart,PET-Z2-CC-180,RC for pedestals,,112,0,80,0,0,0,80,0,0,0,,,,2011-12-21 08:00,2012-01-01 16:00,,2011-12-05 08:00,2011-12-15 16:00,2011-12-05 08:00,2011-12-15 16:00,2011-12-05 08:00,2011-12-15 16:00,,2011-12-21 08:00,2012-01-01 16:00,,PT_Normal,,,,,iUHvepRtakWaHGy3PTuu0Q,,,,N,0,0,,,2011-11-01 20:34,2011-11-01 21:11,admin,admin
205,84176,1076,10926,841,1,0,N,N,N,CP_Drtn,TT_Task,DT_FixedDUR2,RV_OK,TK_NotStart,PET-Z2-CC-230,Plain concrete 50mm thick,,112,0,80,0,0,0,80,0,0,0,,,,2012-01-25 08:00,2012-02-05 16:00,,2012-01-09 08:00,2012-01-19 16:00,2012-01-09 08:00,2012-01-19 16:00,2012-01-09 08:00,2012-01-19 16:00,,2012-01-25 08:00,2012-02-05 16:00,,PT_Normal,,,,,F7TNb0Rr6EKU9Dziiq6EBQ,,,,N,0,0,,,2011-11-01 20:34,2011-11-01 21:11,admin,admin
206,84177,1076,10926,841,1,0,N,N,N,CP_Drtn,TT_Task,DT_FixedDUR2,RV_OK,TK_NotStart,PET-Z2-CC-200,Anchors for steel structure,,112,0,64,0,0,0,64,0,0,0,,,,2011-12-24 08:00,2012-01-01 16:00,,2011-12-07 08:00,2011-12-15 16:00,2011-12-07 08:00,2011-12-15 16:00,2011-12-07 08:00,2011-12-15 16:00,,2011-12-24 08:00,2012-01-01 16:00,,PT_Normal,,,,,jP+Z95DjN0qWwKIejOiIMw,,,,N,0,0,,,2011-11-01 20:34,2011-11-01 21:11,admin,admin
207,84178,1076,10926,841,1,0,N,N,N,CP_Drtn,TT_Task,DT_FixedDUR2,RV_OK,TK_NotStart,PET-Z2-CC-240,Membrane sheet 400 micron,,112,8,80,0,0,0,80,0,0,0,,,,2012-01-25 08:00,2012-02-05 16:00,,2012-01-09 08:00,2012-01-19 16:00,2012-01-09 08:00,2012-01-19 16:00,2012-01-09 08:00,2012-01-19 16:00,,2012-01-25 08:00,2012-02-05 16:00,,PT_Normal,,,,,LtmRmq7TGkGNoiYHVgPIiQ,,,,N,0,0,,,2011-11-01 20:34,2011-11-01 21:11,admin,admin
208,84179,1076,10926,841,1,0,N,N,N,CP_Drtn,TT_Task,DT_FixedDUR2,RV_OK,TK_NotStart,PET-Z2-CC-120,Detect underground Utilities,,112,0,96,0,0,0,96,0,0,0,,,,2011-10-20 08:00,2011-11-02 16:00,,2011-10-04 08:00,2011-10-17 16:00,2011-10-04 08:00,2011-10-17 16:00,2011-10-04 08:00,2011-10-17 16:00,,2011-10-20 08:00,2011-11-02 16:00,,PT_Normal,,,,,zBkUk9yi1kWHM1LSM8olVA,,,,N,0,0,,,2011-11-01 20:34,2011-11-01 21:11,admin,admin
209,84180,1076,10926,841,1,0,N,N,N,CP_Drtn,TT_Task,DT_FixedDUR2,RV_OK,TK_NotStart,PET-Z2-CC-210,Concrete beams & columns for masonry,,128,0,240,0,0,0,240,0,0,0,,,,2012-01-02 08:00,2012-02-05 16:00,,2011-12-14 08:00,2012-01-17 16:00,2011-12-14 08:00,2012-01-17 16:00,2011-12-14 08:00,2012-01-17 16:00,,2012-01-02 08:00,2012-02-05 16:00,,PT_Normal,,,,,+b8n2cJGqkOS6bcg4lneSg,,,,N,0,0,,,2011-11-01 20:34,2011-11-01 21:11,admin,admin
210,84181,1076,10926,841,1,0,N,N,N,CP_Drtn,TT_Task,DT_FixedDUR2,RV_OK,TK_NotStart,PET-Z2-CC-140,Utilities diversion,,112,0,144,0,0,0,144,0,0,0,,,,2011-11-03 08:00,2011-12-01 16:00,,2011-10-18 08:00,2011-11-14 16:00,2011-10-18 08:00,2011-11-14 16:00,2011-10-18 08:00,2011-11-14 16:00,,2011-11-03 08:00,2011-12-01 16:00,,PT_Normal,,,,,wpPaAM9a6EWisQgeSi0wVA,,,,N,0,0,,,2011-11-01 20:34,2011-11-01 21:11,admin,admin
211,84182,1076,10926,841,1,0,N,N,N,CP_Drtn,TT_Task,DT_FixedDUR2,RV_OK,TK_NotStart,PET-Z2-CC-270,Stainless steel pane fixation,,104,0,56,0,0,0,56,0,0,0,,,,2012-03-04 08:00,2012-03-11 16:00,,2012-02-18 08:00,2012-02-25 16:00,2012-02-18 08:00,2012-02-25 16:00,2012-02-18 08:00,2012-02-25 16:00,,2012-03-04 08:00,2012-03-11 16:00,,PT_Normal,,,,,6V5Js/2VZEGrf6wXMVKmvQ,,,,N,0,0,,,2011-11-01 20:34,2011-11-01 21:11,admin,admin
212,84183,1076,10926,841,1,0,N,N,N,CP_Drtn,TT_Task,DT_FixedDUR2,RV_OK,TK_NotStart,PET-Z2-CC-280,Expansion joint,,104,0,56,0,0,0,56,0,0,0,,,,2012-03-04 08:00,2012-03-11 16:00,,2012-02-18 08:00,2012-02-25 16:00,2012-02-18 08:00,2012-02-25 16:00,2012-02-18 08:00,2012-02-25 16:00,,2012-03-04 08:00,2012-03-11 16:00,,PT_Normal,,,,,XaAQC1mRIEukyNpXNiZ75w,,,,N,0,0,,,2011-11-01 20:34,2011-11-01 21:11,admin,admin
213,84184,1076,10926,841,1,0,N,N,N,CP_Drtn,TT_Task,DT_FixedDUR2,RV_OK,TK_NotStart,PET-Z2-CC-225,Steel structure erection(purlins & portal frames),2118,104,0,160,0,70,70,160,0,0,0,,,,2012-01-14 08:00,2012-02-05 16:00,,2011-12-29 08:00,2012-01-21 16:00,2011-12-29 08:00,2012-01-21 16:00,2011-12-29 08:00,2012-01-21 16:00,,2012-01-14 08:00,2012-02-05 16:00,,PT_Normal,,,,,osj7gF3sDEqaEkrA7/s5sw,KglGeUktROiV6+cgO13PMA,,,N,0,0,,,2011-11-01 20:34,2011-11-01 21:11,admin,admin
214,84185,1076,10928,841,1,0,N,N,N,CP_Drtn,TT_Task,DT_FixedDUR2,RV_OK,TK_NotStart,UHT 270,Over head sectional Door erection,,16,0,24,0,0,0,24,0,0,0,,,,2012-02-28 08:00,2012-03-01 16:00,,2012-02-26 08:00,2012-02-28 16:00,2012-02-26 08:00,2012-02-28 16:00,2012-02-26 08:00,2012-02-28 16:00,,2012-02-28 08:00,2012-03-01 16:00,,PT_Normal,,,,,RtROch5XFE6X84aTSjQaFw,HqckL1yxQQ6p/+OMagy7/w,,,N,0,0,,,2011-11-01 20:34,2011-11-01 21:11,admin,admin
215,84186,1076,10928,841,1,0,N,N,N,CP_Drtn,TT_Task,DT_FixedDUR2,RV_OK,TK_NotStart,UHT 170,Dismantle Doors & Louvers,,88,0,32,0,0,0,32,0,0,0,,,,2012-03-10 08:00,2012-03-13 16:00,,2012-02-26 08:00,2012-02-29 16:00,2012-02-26 08:00,2012-02-29 16:00,2012-02-26 08:00,2012-02-29 16:00,,2012-03-10 08:00,2012-03-13 16:00,,PT_Normal,,,,,KyJjU0dInEaIv9wLLgRB8Q,3EeuGMqDDEa7N00fuREHSg,,,N,0,0,,,2011-11-01 20:34,2011-11-01 21:11,admin,admin
216,84187,1076,10928,841,1,0,N,N,N,CP_Drtn,TT_Task,DT_FixedDUR2,RV_OK,TK_NotStart,UHT 220,Dismantle Sandwich Panel,,88,72,40,0,0,0,40,0,0,0,,,,2012-03-14 08:00,2012-03-19 16:00,,2012-03-01 08:00,2012-03-06 16:00,2012-03-01 08:00,2012-03-06 16:00,2012-03-01 08:00,2012-03-06 16:00,,2012-03-14 08:00,2012-03-19 16:00,,PT_Normal,,,,,d9DyNU6xH0SVERCaacfYBw,pBPdI/zT2k+kCKcNvGx2Kg,,,N,0,0,,,2011-11-01 20:34,2011-11-01 21:11,admin,admin
217,84188,1076,10928,841,1,0,N,N,N,CP_Drtn,TT_Task,DT_FixedDUR2,RV_OK,TK_NotStart,UHT 150,Sandwich Panel erection,,184,168,56,0,0,0,56,0,0,0,,,,2012-02-04 08:00,2012-02-11 16:00,,2012-01-08 08:00,2012-01-15 16:00,2012-01-08 08:00,2012-01-15 16:00,2012-01-08 08:00,2012-01-15 16:00,,2012-02-04 08:00,2012-02-11 16:00,,PT_Normal,,,,,R5ldLxzxQ0u5mZggcGYpmw,mx5sj8xGQU+M+podjLAxBA,,,N,0,0,,,2011-11-01 20:34,2011-11-01 21:11,admin,admin
218,84189,1076,10928,841,1,0,N,N,N,CP_Drtn,TT_Task,DT_FixedDUR2,RV_OK,TK_NotStart,UHT 230,Polyurethane Flooring,,16,0,80,0,0,0,80,0,0,0,,,,2012-03-03 08:00,2012-03-13 16:00,,2012-02-29 08:00,2012-03-11 16:00,2012-02-29 08:00,2012-03-11 16:00,2012-02-29 08:00,2012-03-11 16:00,,2012-03-03 08:00,2012-03-13 16:00,,PT_Normal,,,,,9QWf+DpCmEOj/k6861+VwQ,dRvY0/CLMk+5XQE2mIj/ug,,,N,0,0,,,2011-11-01 20:34,2011-11-01 21:11,admin,admin
219,84190,1076,10928,841,1,0,N,N,N,CP_Drtn,TT_Task,DT_FixedDUR2,RV_OK,TK_NotStart,UHT 180,Doors erection,,16,0,24,0,0,0,24,0,0,0,,,,2012-02-28 08:00,2012-03-01 16:00,,2012-02-26 08:00,2012-02-28 16:00,2012-02-26 08:00,2012-02-28 16:00,2012-02-26 08:00,2012-02-28 16:00,,2012-02-28 08:00,2012-03-01 16:00,,PT_Normal,,,,,SDEg7hAWP0K/Wj2+bSPpBw,S8hbNcMIuEm80L9ZYVFP3Q,,,N,0,0,,,2011-11-01 20:34,2011-11-01 21:11,admin,admin
220,84191,1076,10928,841,1,0,N,N,N,CP_Drtn,TT_Task,DT_FixedDUR2,RV_OK,TK_NotStart,UHT 160,Epoxy Paint for old sandwich panel & column base,2106,16,0,80,0,16,16,80,0,0,0,,,,2012-02-12 08:00,2012-02-22 16:00,,2012-02-09 08:00,2012-02-20 16:00,2012-02-09 08:00,2012-02-20 16:00,2012-02-09 08:00,2012-02-20 16:00,,2012-02-12 08:00,2012-02-22 16:00,,PT_Normal,,,,,Fwqc3q9uZU6JzSRT8nf+nQ,dj73gBk5VkGxQ5YwyRdv7A,,,N,0,0,,,2011-11-01 20:34,2011-11-01 21:11,admin,admin
221,84192,1076,10928,841,1,0,N,N,N,CP_Drtn,TT_Task,DT_FixedDUR2,RV_OK,TK_NotStart,UHT 240,Final touch up,,16,0,16,0,0,0,16,0,0,0,,,,2012-03-14 08:00,2012-03-15 16:00,,2012-03-12 08:00,2012-03-13 16:00,2012-03-12 08:00,2012-03-13 16:00,2012-03-12 08:00,2012-03-13 16:00,,2012-03-14 08:00,2012-03-15 16:00,,PT_Normal,,,,,15gMKXETs0KWxAZ4JxExSw,,,,N,0,0,,,2011-11-01 20:34,2011-11-01 21:11,admin,admin
222,84193,1076,10928,841,1,0,N,N,N,CP_Drtn,TT_Task,DT_FixedDUR2,RV_OK,TK_NotStart,UHT 250,Handing over & comissioning,,16,0,24,0,0,0,24,0,0,0,,,,2012-03-17 08:00,2012-03-19 16:00,,2012-03-14 08:00,2012-03-17 16:00,2012-03-14 08:00,2012-03-17 16:00,2012-03-14 08:00,2012-03-17 16:00,,2012-03-17 08:00,2012-03-19 16:00,,PT_Normal,,,,,OajFimlutUietGAw7RuZiQ,,,,N,0,0,,,2011-11-01 20:34,2011-11-01 21:11,admin,admin
223,84194,1076,10928,841,1,0,N,N,N,CP_Drtn,TT_Task,DT_FixedDUR2,RV_OK,TK_NotStart,UHT 200,Louvers erection,,128,112,32,0,0,0,32,0,0,0,,,,2012-03-15 08:00,2012-03-19 16:00,,2012-02-26 08:00,2012-02-29 16:00,2012-02-26 08:00,2012-02-29 16:00,2012-02-26 08:00,2012-02-29 16:00,,2012-03-15 08:00,2012-03-19 16:00,,PT_Normal,,,,,fhI7JXCGh0Whibd+7JS85A,,,,N,0,0,,,2011-11-01 20:34,2011-11-01 21:11,admin,admin
224,84195,1076,10928,841,1,0,N,N,N,CP_Drtn,TT_Task,DT_FixedDUR2,RV_OK,TK_NotStart,UHT 100,Utilities diversion(Electrical),,264,0,80,0,0,0,80,0,0,0,,,,2011-11-02 08:00,2011-11-20 16:00,,2011-09-25 08:00,2011-10-05 16:00,2011-09-25 08:00,2011-10-05 16:00,2011-09-25 08:00,2011-10-05 16:00,,2011-11-02 08:00,2011-11-20 16:00,,PT_Normal,,,,,3Vg6pHcdOUG1LlamqQvYiA,,,,N,0,0,,,2011-11-01 20:34,2011-11-01 21:11,admin,admin
225,84196,1076,10928,841,1,0,N,N,N,CP_Drtn,TT_Task,DT_FixedDUR2,RV_OK,TK_NotStart,UHT 260,Guard bollard erection,,16,0,32,0,0,0,32,0,0,0,,,,2012-02-23 08:00,2012-02-27 16:00,,2012-02-21 08:00,2012-02-25 16:00,2012-02-21 08:00,2012-02-25 16:00,2012-02-21 08:00,2012-02-25 16:00,,2012-02-23 08:00,2012-02-27 16:00,,PT_Normal,,,,,kkMH1xOoJkuXc9EVUFF9lw,,,,N,0,0,,,2011-11-01 20:34,2011-11-01 21:11,admin,admin
226,84197,1076,10929,841,1,0,N,N,N,CP_Drtn,TT_Task,DT_FixedDUR2,RV_OK,TK_NotStart,UHT 130,Plain concrete screed (150mm),,264,0,72,0,0,0,72,0,0,0,,,,2012-01-08 08:00,2012-01-17 16:00,,2011-11-30 08:00,2011-12-10 16:00,2011-11-30 08:00,2011-12-10 16:00,2011-11-30 08:00,2011-12-10 16:00,,2012-01-08 08:00,2012-01-17 16:00,,PT_Normal,,,,,CSTmD4j2fUqsrQtvSsV5rQ,vewLjDJul0CmWy4StnQ7Cw,,,N,0,0,,,2011-11-01 20:34,2011-11-01 21:11,admin,admin
227,84198,1076,10929,841,1,0,N,N,N,CP_Drtn,TT_Task,DT_FixedDUR2,RV_OK,TK_NotStart,UHT 140,Fair face conc. guard base(kerb),,264,0,112,0,0,0,112,0,0,0,,,,2012-01-18 08:00,2012-02-02 16:00,,2011-12-11 08:00,2011-12-26 16:00,2011-12-11 08:00,2011-12-26 16:00,2011-12-11 08:00,2011-12-26 16:00,,2012-01-18 08:00,2012-02-02 16:00,,PT_Normal,,,,,ekuZa23eRUun0QurURehrA,,,,N,0,0,,,2011-11-01 20:34,2011-11-01 21:11,admin,admin
228,84199,1076,10929,841,1,0,N,N,N,CP_Drtn,TT_Task,DT_FixedDUR2,RV_OK,TK_NotStart,UHT 120,Utilities diversion (Plumbing),,264,0,80,0,0,0,80,0,0,0,,,,2011-12-27 08:00,2012-01-07 16:00,,2011-11-17 08:00,2011-11-29 16:00,2011-11-17 08:00,2011-11-29 16:00,2011-11-17 08:00,2011-11-29 16:00,,2011-12-27 08:00,2012-01-07 16:00,,PT_Normal,,,,,fuZIfUrfBUaPKcsHOKWvSA,,,,N,0,0,,,2011-11-01 20:34,2011-11-01 21:11,admin,admin
229,84200,1076,10929,841,1,0,N,N,N,CP_Drtn,TT_Task,DT_FixedDUR2,RV_OK,TK_NotStart,UHT 190,Stainless steel grating cover erection,,376,360,80,0,0,0,80,0,0,0,,,,2012-02-20 08:00,2012-03-01 16:00,,2011-12-27 08:00,2012-01-07 16:00,2011-12-27 08:00,2012-01-07 16:00,2011-12-27 08:00,2012-01-07 16:00,,2012-02-20 08:00,2012-03-01 16:00,,PT_Normal,,,,,pAf4bggo90KRv/wK5AGBGQ,,,,N,0,0,,,2011-11-01 20:34,2011-11-01 21:11,admin,admin
230,84201,1076,10929,841,1,0,N,N,N,CP_Drtn,TT_Task,DT_FixedDUR2,RV_OK,TK_NotStart,UHT 110,Demolishing Slab on Grade,,264,0,240,0,0,0,240,0,0,0,,,,2011-11-21 08:00,2011-12-26 16:00,,2011-10-06 08:00,2011-11-16 16:00,2011-10-06 08:00,2011-11-16 16:00,2011-10-06 08:00,2011-11-16 16:00,,2011-11-21 08:00,2011-12-26 16:00,,PT_Normal,,,,,I+GJhEgRfUqHOIB/I/Gg0g,,,,N,0,0,,,2011-11-01 20:34,2011-11-01 21:11,admin,admin
231,84202,1076,10932,841,1,0,N,N,N,CP_Drtn,TT_Task,DT_FixedDrtn,RV_OK,TK_NotStart,SD 260,Shop Drawings Approval,,24,0,80,0,0,0,80,0,0,0,,,,2011-12-08 08:00,2011-12-19 16:00,,2011-12-05 08:00,2011-12-15 16:00,2011-12-05 08:00,2011-12-15 16:00,2011-12-05 08:00,2011-12-15 16:00,,2011-12-08 08:00,2011-12-19 16:00,,PT_Normal,,,,,A5Kb0bA010yutn0tW8DWXg,Hy6J4Rw8HEGeTclBys0xTg,,,N,0,0,,,2011-11-01 20:34,2011-11-01 21:11,admin,admin
232,84203,1076,10932,841,1,0,N,N,N,CP_Drtn,TT_Task,DT_FixedDrtn,RV_OK,TK_NotStart,SD 200,Shop Drawings submittal,,24,0,80,0,0,0,80,0,0,0,,,,2011-11-21 08:00,2011-12-03 16:00,,2011-11-17 08:00,2011-11-29 16:00,2011-11-17 08:00,2011-11-29 16:00,2011-11-17 08:00,2011-11-29 16:00,,2011-11-21 08:00,2011-12-03 16:00,,PT_Normal,,,,,3qe5aC6xXEea+dFeot9p7A,,,,N,0,0,,,2011-11-01 20:34,2011-11-01 21:11,admin,admin
233,84204,1076,10933,841,1,0,N,N,N,CP_Drtn,TT_Task,DT_FixedDrtn,RV_OK,TK_NotStart,SD 140,Shop Drawings submittal,,104,0,56,0,0,0,56,0,0,0,,,,2011-10-18 08:00,2011-10-25 16:00,,2011-10-03 08:00,2011-10-10 16:00,2011-10-03 08:00,2011-10-10 16:00,2011-10-03 08:00,2011-10-10 16:00,,2011-10-18 08:00,2011-10-25 16:00,,PT_Normal,,,,,8f0I0Uieo0mC6HK35at/sg,yuPzp0G0gUqazOYqnD9zNw,,,N,0,0,,,2011-11-01 20:34,2011-11-01 21:11,admin,admin
234,84205,1076,10933,841,1,0,N,N,N,CP_Drtn,TT_Task,DT_FixedDUR2,RV_OK,TK_NotStart,SD 240,Shop Drawings Approval,,104,0,56,0,0,0,56,0,0,0,,,,2011-11-03 08:00,2011-11-17 16:00,,2011-10-19 08:00,2011-10-26 16:00,2011-10-19 08:00,2011-10-26 16:00,2011-10-19 08:00,2011-10-26 16:00,,2011-11-03 08:00,2011-11-17 16:00,,PT_Normal,,,,,XBlsHyZfx0S3k3b5KGGxiA,Hy6J4Rw8HEGeTclBys0xTg,,,N,0,0,,,2011-11-01 20:34,2011-11-01 21:11,admin,admin
235,84206,1076,10934,841,1,0,N,N,N,CP_Drtn,TT_Task,DT_FixedDrtn,RV_OK,TK_NotStart,SD 160,Shop Drawings submittal,,208,0,56,0,0,0,56,0,0,0,,,,2011-12-01 08:00,2011-12-08 16:00,,2011-10-24 08:00,2011-10-31 16:00,2011-10-24 08:00,2011-10-31 16:00,2011-10-24 08:00,2011-10-31 16:00,,2011-12-01 08:00,2011-12-08 16:00,,PT_Normal,,,,,fO9de5reE0+DWnW483EmuA,yuPzp0G0gUqazOYqnD9zNw,,,N,0,0,,,2011-11-01 20:34,2011-11-01 21:11,admin,admin
236,84207,1076,10934,841,1,0,N,N,N,CP_Drtn,TT_Task,DT_FixedDUR2,RV_OK,TK_NotStart,SD 250,Shop Drawings Approval,,208,40,56,0,0,0,56,0,0,0,,,,2011-12-18 08:00,2011-12-25 16:00,,2011-11-16 08:00,2011-11-23 16:00,2011-11-16 08:00,2011-11-23 16:00,2011-11-16 08:00,2011-11-23 16:00,,2011-12-18 08:00,2011-12-25 16:00,,PT_Normal,,,,,3fc6j8J5cU+Cv2m7UAMx4A,Hy6J4Rw8HEGeTclBys0xTg,,,N,0,0,,,2011-11-01 20:34,2011-11-01 21:11,admin,admin
237,84208,1076,10935,841,1,0,N,N,N,CP_Drtn,TT_Task,DT_FixedDrtn,RV_OK,TK_NotStart,SD 220,Shop Drawings submittal,,176,0,56,0,0,0,56,0,0,0,,,,2011-12-03 08:00,2011-12-10 16:00,,2011-10-30 08:00,2011-11-13 16:00,2011-10-30 08:00,2011-11-13 16:00,2011-10-30 08:00,2011-11-13 16:00,,2011-12-03 08:00,2011-12-10 16:00,,PT_Normal,,,,,R2U762HhnEir/TCiWO2qew,i8FZXkCYckmh4dS0eUXPTA,,,N,0,0,,,2011-11-01 20:34,2011-11-01 21:11,admin,admin
238,84209,1076,10935,841,1,0,N,N,N,CP_Drtn,TT_Task,DT_FixedDUR2,RV_OK,TK_NotStart,SD 280,Shop Drawings Approval,,176,0,56,0,0,0,56,0,0,0,,,,2011-12-19 08:00,2011-12-26 16:00,,2011-11-22 08:00,2011-11-30 16:00,2011-11-22 08:00,2011-11-30 16:00,2011-11-22 08:00,2011-11-30 16:00,,2011-12-19 08:00,2011-12-26 16:00,,PT_Normal,,,,,TynDfIpYDUeBD+6ABR88pg,uFsE4ciLtEKE7b23FaSXkA,,,N,0,0,,,2011-11-01 20:34,2011-11-01 21:11,admin,admin
239,84210,1076,10936,841,1,0,N,N,N,CP_Drtn,TT_Task,DT_FixedDUR2,RV_OK,TK_NotStart,SD 130,Shop Drawings submittal,,184,0,8,0,0,0,8,0,0,0,,,,2011-12-13 08:00,2011-12-13 16:00,,2011-11-15 08:00,2011-11-15 16:00,2011-11-15 08:00,2011-11-15 16:00,2011-11-15 08:00,2011-11-15 16:00,,2011-12-13 08:00,2011-12-13 16:00,,PT_Normal,,,,,6SGIsUTlHUSrHVAEtpXu2A,,,,N,0,0,,,2011-11-01 20:34,2011-11-01 21:11,admin,admin
240,84211,1076,10936,841,1,0,N,N,N,CP_Drtn,TT_Task,DT_FixedDUR2,RV_OK,TK_NotStart,SD 190,Shop Drawings Approval,,184,0,8,0,0,0,8,0,0,0,,,,2011-12-29 08:00,2011-12-29 16:00,,2011-12-03 08:00,2011-12-03 16:00,2011-12-03 08:00,2011-12-03 16:00,2011-12-03 08:00,2011-12-03 16:00,,2011-12-29 08:00,2011-12-29 16:00,,PT_Normal,,,,,YBOoWaW5yEmI9mOGoh2pkw,,,,N,0,0,,,2011-11-01 20:34,2011-11-01 21:11,admin,admin
241,84212,1076,10937,841,1,0,N,N,N,CP_Drtn,TT_Task,DT_FixedDUR2,RV_OK,TK_NotStart,SD 150,Shop Drawings Approval,,104,0,48,0,0,0,48,0,0,0,,,,2011-11-03 08:00,2011-11-16 16:00,,2011-10-19 08:00,2011-10-25 16:00,2011-10-19 08:00,2011-10-25 16:00,2011-10-19 08:00,2011-10-25 16:00,,2011-11-03 08:00,2011-11-16 16:00,,PT_Normal,,,,,GZdzqcyilE2yjpJKmC2o8Q,uFsE4ciLtEKE7b23FaSXkA,,,N,0,0,,,2011-11-01 20:34,2011-11-01 21:11,admin,admin
242,84213,1076,10937,841,1,0,N,N,N,CP_Drtn,TT_Task,DT_FixedDrtn,RV_OK,TK_NotStart,SD 100,Shop Drawings submittal,,104,0,48,0,0,0,48,0,0,0,,,,2011-10-18 08:00,2011-10-24 16:00,,2011-10-03 08:00,2011-10-09 16:00,2011-10-03 08:00,2011-10-09 16:00,2011-10-03 08:00,2011-10-09 16:00,,2011-10-18 08:00,2011-10-24 16:00,,PT_Normal,,,,,PDoW1HC2DUuSMgbZtzhS4w,i8FZXkCYckmh4dS0eUXPTA,,,N,0,0,,,2011-11-01 20:34,2011-11-01 21:11,admin,admin
243,84214,1076,10938,841,1,0,N,N,N,CP_Drtn,TT_Task,DT_FixedDrtn,RV_OK,TK_NotStart,SD 120,Shop Drawings submittal,,104,0,48,0,0,0,48,0,0,0,,,,2011-10-26 08:00,2011-11-01 16:00,,2011-10-11 08:00,2011-10-17 16:00,2011-10-11 08:00,2011-10-17 16:00,2011-10-11 08:00,2011-10-17 16:00,,2011-10-26 08:00,2011-11-01 16:00,,PT_Normal,,,,,ABFyZnC/R0+tjHWzK5pWtA,i8FZXkCYckmh4dS0eUXPTA,,,N,0,0,,,2011-11-01 20:34,2011-11-01 21:11,admin,admin
244,84215,1076,10938,841,1,0,N,N,N,CP_Drtn,TT_Task,DT_FixedDUR2,RV_OK,TK_NotStart,SD 180,Shop Drawings Approval,,104,0,48,0,0,0,48,0,0,0,,,,2011-11-19 08:00,2011-11-24 16:00,,2011-10-27 08:00,2011-11-02 16:00,2011-10-27 08:00,2011-11-02 16:00,2011-10-27 08:00,2011-11-02 16:00,,2011-11-19 08:00,2011-11-24 16:00,,PT_Normal,,,,,60UjfLjL6EeMv7J5/QnXfA,uFsE4ciLtEKE7b23FaSXkA,,,N,0,0,,,2011-11-01 20:34,2011-11-01 21:11,admin,admin
245,84216,1076,10939,841,1,0,N,N,N,CP_Drtn,TT_Task,DT_FixedDrtn,RV_OK,TK_NotStart,SD 210,Shop Drawings submittal,,80,0,56,0,0,0,56,0,0,0,,,,2012-01-22 08:00,2012-01-29 16:00,,2012-01-10 08:00,2012-01-17 16:00,2012-01-10 08:00,2012-01-17 16:00,2012-01-10 08:00,2012-01-17 16:00,,2012-01-22 08:00,2012-01-29 16:00,,PT_Normal,,,,,f5AnF4Zfj0mBECMCU0iZ5Q,i8FZXkCYckmh4dS0eUXPTA,,,N,0,0,,,2011-11-01 20:34,2011-11-01 21:11,admin,admin
246,84217,1076,10939,841,1,0,N,N,N,CP_Drtn,TT_Task,DT_FixedDUR2,RV_OK,TK_NotStart,SD 270,Shop Drawings Approval,,80,0,56,0,0,0,56,0,0,0,,,,2012-02-07 08:00,2012-02-14 16:00,,2012-01-26 08:00,2012-02-02 16:00,2012-01-26 08:00,2012-02-02 16:00,2012-01-26 08:00,2012-02-02 16:00,,2012-02-07 08:00,2012-02-14 16:00,,PT_Normal,,,,,5eGjan588Ey6/v9dEFqz3Q,uFsE4ciLtEKE7b23FaSXkA,,,N,0,0,,,2011-11-01 20:34,2011-11-01 21:11,admin,admin
247,84218,1076,10940,841,1,0,N,N,N,CP_Drtn,TT_Task,DT_FixedDrtn,RV_OK,TK_NotStart,SD 110,Shop Drawings submittal,,8,0,168,0,0,0,168,0,0,0,,,,2011-11-21 08:00,2011-12-15 16:00,,2011-11-20 08:00,2011-12-14 16:00,2011-11-20 08:00,2011-12-14 16:00,2011-11-20 08:00,2011-12-14 16:00,,2011-11-21 08:00,2011-12-15 16:00,,PT_Normal,,,,,Ter9ZaEJs0O2m04Cb55tQA,yuPzp0G0gUqazOYqnD9zNw,,,N,0,0,,,2011-11-01 20:34,2011-11-01 21:11,admin,admin
248,84219,1076,10940,841,1,0,N,N,N,CP_Drtn,TT_Task,DT_FixedDrtn,RV_OK,TK_NotStart,SD 170,Shop Drawings Approval,,8,0,168,0,0,0,168,0,0,0,,,,2011-12-08 08:00,2012-01-01 16:00,,2011-12-07 08:00,2011-12-31 16:00,2011-12-07 08:00,2011-12-31 16:00,2011-12-07 08:00,2011-12-31 16:00,,2011-12-08 08:00,2012-01-01 16:00,,PT_Normal,,,,,ruUDM5wl10CbJNHCe0pV/g,Hy6J4Rw8HEGeTclBys0xTg,,,N,0,0,,,2011-11-01 20:34,2011-11-01 21:11,admin,admin
249,84220,1076,10941,841,0,0,N,N,N,CP_Drtn,TT_FinMile,DT_FixedDrtn,RV_OK,TK_NotStart,SD 300,As built submittal,,32,0,0,0,0,0,0,0,0,0,,,,2012-04-01 16:00,2012-04-01 16:00,,2012-03-27 16:00,2012-03-27 16:00,2012-03-27 16:00,2012-03-27 16:00,2012-03-27 16:00,2012-03-27 16:00,,2012-04-01 16:00,2012-04-01 16:00,,PT_Normal,,,,,qfqno4em5k+gEv5/y2u1ig,,,,N,0,0,,,2011-11-01 20:34,2011-11-01 21:11,admin,admin
250,84221,1076,10942,841,1,0,N,N,N,CP_Drtn,TT_Task,DT_FixedDrtn,RV_OK,TK_NotStart,SD 230,Shop Drawings submittal,,176,0,56,0,0,0,56,0,0,0,,,,2011-12-03 08:00,2011-12-10 16:00,,2011-10-30 08:00,2011-11-13 16:00,2011-10-30 08:00,2011-11-13 16:00,2011-10-30 08:00,2011-11-13 16:00,,2011-12-03 08:00,2011-12-10 16:00,,PT_Normal,,,,,DLTvaTz4Q0ia9PNi9sDHXg,i8FZXkCYckmh4dS0eUXPTA,,,N,0,0,,,2011-11-01 20:34,2011-11-01 21:11,admin,admin
251,84222,1076,10942,841,1,0,N,N,N,CP_Drtn,TT_Task,DT_FixedDUR2,RV_OK,TK_NotStart,SD 290,Shop Drawings Approval,,176,0,56,0,0,0,56,0,0,0,,,,2011-12-19 08:00,2011-12-26 16:00,,2011-11-22 08:00,2011-11-30 16:00,2011-11-22 08:00,2011-11-30 16:00,2011-11-22 08:00,2011-11-30 16:00,,2011-12-19 08:00,2011-12-26 16:00,,PT_Normal,,,,,jo0Kdc/WUEO0+82FfVTuhA,uFsE4ciLtEKE7b23FaSXkA,,,N,0,0,,,2011-11-01 20:34,2011-11-01 21:11,admin,admin
