,task_id,proj_id,wbs_id,clndr_id,est_wt,phys_complete_pct,rev_fdbk_flag,lock_plan_flag,auto_compute_act_flag,complete_pct_type,task_type,duration_type,review_type,status_code,task_code,task_name,rsrc_id,total_float_hr_cnt,free_float_hr_cnt,remain_drtn_hr_cnt,act_work_qty,remain_work_qty,target_work_qty,target_drtn_hr_cnt,target_equip_qty,act_equip_qty,remain_equip_qty,cstr_date,act_start_date,act_end_date,late_start_date,late_end_date,expect_end_date,early_start_date,early_end_date,restart_date,reend_date,target_start_date,target_end_date,review_end_date,rem_late_start_date,rem_late_end_date,cstr_type,priority_type,suspend_date,resume_date,float_path,float_path_order,guid,tmpl_guid,cstr_date2,cstr_type2,driving_path_flag,act_this_per_work_qty,act_this_per_equip_qty,external_early_start_date,external_late_end_date,create_date,update_date,create_user,update_user,old_restart_date,old_reend_date,old_remain_drtn_hr_cnt
0,89743,785,11681,841,0,0,N,N,N,CP_Drtn,TT_Mile,DT_FixedDrtn,RV_OK,TK_NotStart,A1000,Start project,,0,0,0,0,0,0,0,0,0,0,,,,2010-07-01 08:00,2010-07-01 08:00,,2010-07-01 08:00,2010-07-01 08:00,2010-07-01 08:00,2010-07-01 08:00,2010-07-01 08:00,2010-07-01 08:00,,2010-07-01 08:00,2010-07-01 08:00,,PT_Normal,,,,,Icre7FhMJkWSzlDnAv/zCg,,,,Y,0,0,,,2010-08-08 13:19,2010-08-18 21:34,admin,admin,2010-07-01 08:00,2010-07-01 08:00,0
1,89744,785,11681,841,0,0,N,N,N,CP_Drtn,TT_FinMile,DT_FixedDrtn,RV_OK,TK_NotStart,A1010,Finish project,,0,0,0,0,0,0,0,0,0,0,,,,2010-10-07 16:00,2010-10-07 16:00,,2010-10-07 16:00,2010-10-07 16:00,2010-10-07 16:00,2010-10-07 16:00,2010-10-07 16:00,2010-10-07 16:00,,2010-10-07 16:00,2010-10-07 16:00,,PT_Normal,,,,,PGDoKAeI50+He0ZlvuoGFA,,,,Y,0,0,,,2010-08-08 13:19,2010-08-18 21:34,admin,admin,2010-10-07 16:00,2010-10-07 16:00,0
2,89745,785,11681,841,1,0,N,N,N,CP_Drtn,TT_Task,DT_FixedDUR2,RV_OK,TK_NotStart,A1020,Mobilization,,608,608,64,0,0,0,64,0,0,0,,,,2010-09-29 08:00,2010-10-07 16:00,,2010-07-01 08:00,2010-07-10 16:00,2010-07-01 08:00,2010-07-10 16:00,2010-07-01 08:00,2010-07-10 16:00,,2010-09-29 08:00,2010-10-07 16:00,,PT_Normal,,,,,x8fPXCN5PUafGzTDZjRTIw,,,,N,0,0,,,2010-08-08 13:19,2010-08-18 04:00,admin,admin,2010-07-01 08:00,2010-07-10 16:00,64
3,89746,785,11708,841,1,0,N,N,N,CP_Drtn,TT_Task,DT_FixedDUR2,RV_OK,TK_NotStart,A1030,Formwork For R.C raft,,8,0,64,0,288,288,64,0,0,0,,,,2010-07-07 08:00,2010-07-15 16:00,,2010-07-06 08:00,2010-07-14 16:00,2010-07-06 08:00,2010-07-14 16:00,2010-07-06 08:00,2010-07-14 16:00,,2010-07-07 08:00,2010-07-15 16:00,,PT_Normal,,,,,C94j0SAa0UKjw8hlWJkQ9A,,,,N,0,0,,,2010-08-08 13:19,2010-08-17 15:42,admin,admin,2010-07-06 08:00,2010-07-14 16:00,64
4,89747,785,11708,841,1,0,N,N,N,CP_Drtn,TT_Task,DT_FixedDUR2,RV_OK,TK_NotStart,A1040,Rebar For R.C raft,2117,0,0,56,0,2080,2080,56,0,0,0,,,,2010-07-15 08:00,2010-07-22 16:00,,2010-07-15 08:00,2010-07-22 16:00,2010-07-15 08:00,2010-07-22 16:00,2010-07-15 08:00,2010-07-22 16:00,,2010-07-15 08:00,2010-07-22 16:00,,PT_Normal,,,,,J7PIVb5Ybk2FGsLmDiJAGA,,,,Y,0,0,,,2010-08-08 13:19,2010-08-18 21:34,admin,admin,2010-07-15 08:00,2010-07-22 16:00,56
5,89748,785,11708,841,0,0,N,N,N,CP_Drtn,TT_FinMile,DT_FixedDrtn,RV_OK,TK_NotStart,A1050,M&E conduits For R.C raft (by others),,7.98333333333333,7.98333333333333,0,0,0,0,0,0,0,0,,,,2010-07-21 16:00,2010-07-21 16:00,,2010-07-21 08:01,2010-07-21 08:01,2010-07-21 08:01,2010-07-21 08:01,2010-07-21 08:01,2010-07-21 08:01,,2010-07-21 16:00,2010-07-21 16:00,,PT_Normal,,,,,WmEcaziuPkWH0YKHC9x86Q,,,,N,0,0,,,2010-08-08 13:19,2010-08-18 21:33,admin,admin,2010-07-21 08:01,2010-07-21 08:01,0
6,89749,785,11708,841,1,0,N,N,N,CP_Drtn,TT_Task,DT_FixedDUR2,RV_OK,TK_NotStart,A1060,Pouring For R.C raft,,0,0,16,0,168,168,16,0,0,0,,,,2010-07-24 08:00,2010-07-25 16:00,,2010-07-24 08:00,2010-07-25 16:00,2010-07-24 08:00,2010-07-25 16:00,2010-07-24 08:00,2010-07-25 16:00,,2010-07-24 08:00,2010-07-25 16:00,,PT_Normal,,,,,k4oeQZnaVUyZDfWYdTgYIQ,,,,Y,0,0,,,2010-08-08 13:19,2010-08-18 21:34,admin,admin,2010-07-24 08:00,2010-07-25 16:00,16
7,89750,785,11709,841,1,0,N,N,N,CP_Drtn,TT_Task,DT_FixedDUR2,RV_OK,TK_NotStart,A1070,Formwork For basement walls & col.,,0,0,56,0,1440,1440,56,0,0,0,,,,2010-07-27 08:00,2010-08-03 16:00,,2010-07-27 08:00,2010-08-03 16:00,2010-07-27 08:00,2010-08-03 16:00,2010-07-27 08:00,2010-08-03 16:00,,2010-07-27 08:00,2010-08-03 16:00,,PT_Normal,,,,,oAGSCEa/N0OGiaOmDlQOIQ,,,,Y,0,0,,,2010-08-08 13:19,2010-08-18 21:34,admin,admin,2010-07-27 08:00,2010-08-03 16:00,56
8,89751,785,11709,841,1,0,N,N,N,CP_Drtn,TT_Task,DT_FixedDUR2,RV_OK,TK_NotStart,A1080,Rebar For  basement walls & col.,2117,0,0,24,0,1440,1440,24,0,0,0,,,,2010-08-01 08:00,2010-08-03 16:00,,2010-08-01 08:00,2010-08-03 16:00,2010-08-01 08:00,2010-08-03 16:00,2010-08-01 08:00,2010-08-03 16:00,,2010-08-01 08:00,2010-08-03 16:00,,PT_Normal,,,,,SBpAOjCWjkaeJkCtSuNODA,,,,Y,0,0,,,2010-08-08 13:19,2010-08-18 21:34,admin,admin,2010-08-01 08:00,2010-08-03 16:00,24
9,89752,785,11709,841,1,0,N,N,N,CP_Drtn,TT_Task,DT_FixedDUR2,RV_OK,TK_NotStart,A1090,Pouring For  basement walls & col.,,0,0,8,0,96,96,8,0,0,0,,,,2010-08-04 08:00,2010-08-04 16:00,,2010-08-04 08:00,2010-08-04 16:00,2010-08-04 08:00,2010-08-04 16:00,2010-08-04 08:00,2010-08-04 16:00,,2010-08-04 08:00,2010-08-04 16:00,,PT_Normal,,,,,FqlS0NCAv0qClew82W2jsw,,,,Y,0,0,,,2010-08-08 13:19,2010-08-18 21:34,admin,admin,2010-08-04 08:00,2010-08-04 16:00,8
10,89753,785,11724,841,1,0,N,N,N,CP_Drtn,TT_Task,DT_FixedDUR2,RV_OK,TK_NotStart,A1061,Isolation For Foundation bituminous emulsion,,264,136,48,0,240,240,48,0,0,0,,,,2010-09-16 08:00,2010-09-22 16:00,,2010-08-08 08:00,2010-08-14 16:00,2010-08-08 08:00,2010-08-14 16:00,2010-08-08 08:00,2010-08-14 16:00,,2010-09-16 08:00,2010-09-22 16:00,,PT_Normal,,,,,5aRliP5UAUK9Ft7lCvh0Tw,,,,N,0,0,,,2010-08-08 13:19,2010-08-18 04:00,admin,admin,2010-08-08 08:00,2010-08-14 16:00,48
11,89754,785,11710,841,1,0,N,N,N,CP_Drtn,TT_Task,DT_FixedDUR2,RV_OK,TK_NotStart,A1100,Formwork For basement Slab & stairs,,0,0,80,0,2880,2880,80,0,0,0,,,,2010-08-07 08:00,2010-08-17 16:00,,2010-08-07 08:00,2010-08-17 16:00,2010-08-07 08:00,2010-08-17 16:00,2010-08-07 08:00,2010-08-17 16:00,,2010-08-07 08:00,2010-08-17 16:00,,PT_Normal,,,,,8EFVtIWXxU2tWAcIQrLPuA,,,,Y,0,0,,,2010-08-08 13:19,2010-08-18 21:34,admin,admin,2010-08-07 08:00,2010-08-17 16:00,80
12,89755,785,11710,841,1,0,N,N,N,CP_Drtn,TT_Task,DT_FixedDUR2,RV_OK,TK_NotStart,A1110,Rebar For basement Slab & stairs,2117,0,0,48,0,1080,1080,48,0,0,0,,,,2010-08-16 08:00,2010-08-22 16:00,,2010-08-16 08:00,2010-08-22 16:00,2010-08-16 08:00,2010-08-22 16:00,2010-08-16 08:00,2010-08-22 16:00,,2010-08-16 08:00,2010-08-22 16:00,,PT_Normal,,,,,Re47apFh6UqgTcdju67jHQ,,,,Y,0,0,,,2010-08-08 13:19,2010-08-18 21:34,admin,admin,2010-08-16 08:00,2010-08-22 16:00,48
13,89756,785,11710,841,0,0,N,N,N,CP_Drtn,TT_FinMile,DT_FixedDrtn,RV_OK,TK_NotStart,A1120,M&E conduits For basement Slab & stairs(by others),,7.98333333333333,7.98333333333333,0,0,0,0,0,0,0,0,,,,2010-08-21 16:00,2010-08-21 16:00,,2010-08-21 08:01,2010-08-21 08:01,2010-08-21 08:01,2010-08-21 08:01,2010-08-21 08:01,2010-08-21 08:01,,2010-08-21 16:00,2010-08-21 16:00,,PT_Normal,,,,,KptHu2eiY0+SimB/RTNx+A,,,,N,0,0,,,2010-08-08 13:19,2010-08-18 21:33,admin,admin,2010-08-21 08:01,2010-08-21 08:01,0
14,89757,785,11710,841,1,0,N,N,N,CP_Drtn,TT_Task,DT_FixedDUR2,RV_OK,TK_NotStart,A1130,Pouring For basement Slab &stairs,,0,0,8,0,96,96,8,0,0,0,,,,2010-08-23 08:00,2010-08-23 16:00,,2010-08-23 08:00,2010-08-23 16:00,2010-08-23 08:00,2010-08-23 16:00,2010-08-23 08:00,2010-08-23 16:00,,2010-08-23 08:00,2010-08-23 16:00,,PT_Normal,,,,,uXWzCHcYDU2AWuwEFMPJSw,,,,Y,0,0,,,2010-08-08 13:19,2010-08-18 21:34,admin,admin,2010-08-23 08:00,2010-08-23 16:00,8
15,89758,785,11724,841,1,0,N,N,N,CP_Drtn,TT_Task,DT_FixedDUR2,RV_OK,TK_NotStart,A1064,Water proofing bituminous membrane,,224,0,48,0,720,720,48,0,0,0,,,,2010-09-08 08:00,2010-09-15 16:00,,2010-08-07 08:00,2010-08-12 16:00,2010-08-07 08:00,2010-08-12 16:00,2010-08-07 08:00,2010-08-12 16:00,,2010-09-08 08:00,2010-09-15 16:00,,PT_Normal,,,,,DFNVVQp1pEuEJ+A66o2d4w,,,,N,0,0,,,2010-08-08 13:19,2010-08-18 04:00,admin,admin,2010-08-07 08:00,2010-08-12 16:00,48
16,89759,785,11724,841,1,0,N,N,N,CP_Drtn,TT_Task,DT_FixedDUR2,RV_OK,TK_NotStart,A1065,Water proofing protection layer cartonal,2121,224,96,48,0,720,720,48,0,0,0,,,,2010-09-16 08:00,2010-09-22 16:00,,2010-08-14 08:00,2010-08-19 16:00,2010-08-14 08:00,2010-08-19 16:00,2010-08-14 08:00,2010-08-19 16:00,,2010-09-16 08:00,2010-09-22 16:00,,PT_Normal,,,,,U98n5Hf3O0mzkeZuVQ0R5w,,,,N,0,0,,,2010-08-08 13:19,2010-08-18 04:00,admin,admin,2010-08-14 08:00,2010-08-19 16:00,48
17,89760,785,11691,841,0,0,N,N,N,CP_Drtn,TT_FinMile,DT_FixedDrtn,RV_OK,TK_NotStart,A1140,Submittal of All R.C raft dimension,,8,0,0,0,0,0,0,0,0,0,,,,2010-07-03 16:00,2010-07-03 16:00,,2010-07-01 16:00,2010-07-01 16:00,2010-07-01 16:00,2010-07-01 16:00,2010-07-01 16:00,2010-07-01 16:00,,2010-07-03 16:00,2010-07-03 16:00,,PT_Normal,,,,,6uOjvPwe2EeHGTbMonMnww,,,,N,0,0,,,2010-08-08 13:19,2010-08-17 15:42,admin,admin,2010-07-01 16:00,2010-07-01 16:00,0
18,89761,785,11691,841,0,0,N,N,N,CP_Drtn,TT_FinMile,DT_FixedDrtn,RV_OK,TK_NotStart,A1150,Submittal of All column layout,,8,0,0,0,0,0,0,0,0,0,,,,2010-07-03 16:00,2010-07-03 16:00,,2010-07-01 16:00,2010-07-01 16:00,2010-07-01 16:00,2010-07-01 16:00,2010-07-01 16:00,2010-07-01 16:00,,2010-07-03 16:00,2010-07-03 16:00,,PT_Normal,,,,,JZgRN1urQ0K+I2iCOkWAvg,,,,N,0,0,,,2010-08-08 13:19,2010-08-17 15:42,admin,admin,2010-07-01 16:00,2010-07-01 16:00,0
19,89762,785,11691,841,0,0,N,N,N,CP_Drtn,TT_FinMile,DT_FixedDrtn,RV_OK,TK_NotStart,A1160,Submittal of All R.C raft RFT&starters,,0,0,0,0,0,0,0,0,0,0,,,,2010-07-11 16:00,2010-07-11 16:00,,2010-07-11 16:00,2010-07-11 16:00,2010-07-11 16:00,2010-07-11 16:00,2010-07-11 16:00,2010-07-11 16:00,,2010-07-11 16:00,2010-07-11 16:00,,PT_Normal,,,,,Bs80fUQbA0e4vPW0HARoRw,,,,Y,0,0,,,2010-08-08 13:19,2010-08-18 21:34,admin,admin,2010-07-11 16:00,2010-07-11 16:00,0
20,89763,785,11691,841,0,0,N,N,N,CP_Drtn,TT_FinMile,DT_FixedDrtn,RV_OK,TK_NotStart,A1170,Submittal of All basement columns & walls RFT,,40,0,0,0,0,0,0,0,0,0,,,,2010-07-27 16:00,2010-07-27 16:00,,2010-07-21 16:00,2010-07-21 16:00,2010-07-21 16:00,2010-07-21 16:00,2010-07-21 16:00,2010-07-21 16:00,,2010-07-27 16:00,2010-07-27 16:00,,PT_Normal,,,,,ivXb7YwlMk6lWctvmqSKog,,,,N,0,0,,,2010-08-08 13:19,2010-08-17 15:42,admin,admin,2010-07-21 16:00,2010-07-21 16:00,0
21,89764,785,11691,841,0,0,N,N,N,CP_Drtn,TT_FinMile,DT_FixedDrtn,RV_OK,TK_NotStart,A1180,Submittal of All basement slab concrete dimension,,32,0,0,0,0,0,0,0,0,0,,,,2010-08-02 16:00,2010-08-02 16:00,,2010-07-28 16:00,2010-07-28 16:00,2010-07-28 16:00,2010-07-28 16:00,2010-07-28 16:00,2010-07-28 16:00,,2010-08-02 16:00,2010-08-02 16:00,,PT_Normal,,,,,DW3mvtmHOUyuTbSvXfzntA,,,,N,0,0,,,2010-08-08 13:19,2010-08-17 15:42,admin,admin,2010-07-28 16:00,2010-07-28 16:00,0
22,89765,785,11691,841,0,0,N,N,N,CP_Drtn,TT_FinMile,DT_FixedDrtn,RV_OK,TK_NotStart,A1190,Submittal of All basement slab RFT,,48,0,0,0,0,0,0,0,0,0,,,,2010-08-11 16:00,2010-08-11 16:00,,2010-08-04 16:00,2010-08-04 16:00,2010-08-04 16:00,2010-08-04 16:00,2010-08-04 16:00,2010-08-04 16:00,,2010-08-11 16:00,2010-08-11 16:00,,PT_Normal,,,,,T0xSsjnOvU6jEoZPUVsN3g,,,,N,0,0,,,2010-08-08 13:19,2010-08-17 15:42,admin,admin,2010-08-04 16:00,2010-08-04 16:00,0
23,89766,785,11693,841,0,0,N,N,N,CP_Drtn,TT_FinMile,DT_FixedDrtn,RV_OK,TK_NotStart,A1200,Submittal of All R.C raft dimension,,32,0,0,0,0,0,0,0,0,0,,,,2010-07-15 16:00,2010-07-15 16:00,,2010-07-11 16:00,2010-07-11 16:00,2010-07-11 16:00,2010-07-11 16:00,2010-07-11 16:00,2010-07-11 16:00,,2010-07-15 16:00,2010-07-15 16:00,,PT_Normal,,,,,zQQqnmXjT06jP2oScCYrmg,TnE0Il9fMEmUAPp54M1FxQ,,,N,0,0,,,2010-08-08 13:19,2010-08-17 15:42,admin,admin,2010-07-11 16:00,2010-07-11 16:00,0
24,89767,785,11693,841,0,0,N,N,N,CP_Drtn,TT_FinMile,DT_FixedDrtn,RV_OK,TK_NotStart,A1210,Submittal of All column layout,,32,0,0,0,0,0,0,0,0,0,,,,2010-07-15 16:00,2010-07-15 16:00,,2010-07-11 16:00,2010-07-11 16:00,2010-07-11 16:00,2010-07-11 16:00,2010-07-11 16:00,2010-07-11 16:00,,2010-07-15 16:00,2010-07-15 16:00,,PT_Normal,,,,,rcb3z9ws3UC+VCYdKr5YUQ,Gp+LX5Ae4kObTifd8mF+VA,,,N,0,0,,,2010-08-08 13:19,2010-08-17 15:42,admin,admin,2010-07-11 16:00,2010-07-11 16:00,0
25,89768,785,11693,841,0,0,N,N,N,CP_Drtn,TT_FinMile,DT_FixedDrtn,RV_OK,TK_NotStart,A1220,Submittal of All R.C raft RFT&starters,,48,0,0,0,0,0,0,0,0,0,,,,2010-07-28 16:00,2010-07-28 16:00,,2010-07-21 16:00,2010-07-21 16:00,2010-07-21 16:00,2010-07-21 16:00,2010-07-21 16:00,2010-07-21 16:00,,2010-07-28 16:00,2010-07-28 16:00,,PT_Normal,,,,,s/VF61bzyUiOUgXXh11S+Q,xzvMiT8HoUauXhFY1S+PkA,,,N,0,0,,,2010-08-08 13:19,2010-08-17 15:42,admin,admin,2010-07-21 16:00,2010-07-21 16:00,0
26,89769,785,11693,841,0,0,N,N,N,CP_Drtn,TT_FinMile,DT_FixedDrtn,RV_OK,TK_NotStart,A1230,Submittal of All basement columns & walls RFT,,0,0,0,0,0,0,0,0,0,0,,,,2010-07-28 16:00,2010-07-28 16:00,,2010-07-28 16:00,2010-07-28 16:00,2010-07-28 16:00,2010-07-28 16:00,2010-07-28 16:00,2010-07-28 16:00,,2010-07-28 16:00,2010-07-28 16:00,,PT_Normal,,,,,xkk5WQem+EmyZZyS1wINJA,vizYnfHl90u2hozwrJxUGA,,,Y,0,0,,,2010-08-08 13:19,2010-08-18 21:34,admin,admin,2010-07-28 16:00,2010-07-28 16:00,0
27,89770,785,11693,841,0,0,N,N,N,CP_Drtn,TT_FinMile,DT_FixedDrtn,RV_OK,TK_NotStart,A1240,Submittal of All basement slab concrete dimension,,136,0,0,0,0,0,0,0,0,0,,,,2010-08-24 16:00,2010-08-24 16:00,,2010-08-04 16:00,2010-08-04 16:00,2010-08-04 16:00,2010-08-04 16:00,2010-08-04 16:00,2010-08-04 16:00,,2010-08-24 16:00,2010-08-24 16:00,,PT_Normal,,,,,RIfjyNWU2EegjTFgFDKB3A,YjPP8Mnn70CflT1uK45yIg,,,N,0,0,,,2010-08-08 13:19,2010-08-17 15:42,admin,admin,2010-08-04 16:00,2010-08-04 16:00,0
28,89771,785,11693,841,0,0,N,N,N,CP_Drtn,TT_FinMile,DT_FixedDrtn,RV_OK,TK_NotStart,A1250,Submittal of All basement slab RFT,,128,0,0,0,0,0,0,0,0,0,,,,2010-09-02 16:00,2010-09-02 16:00,,2010-08-15 16:00,2010-08-15 16:00,2010-08-15 16:00,2010-08-15 16:00,2010-08-15 16:00,2010-08-15 16:00,,2010-09-02 16:00,2010-09-02 16:00,,PT_Normal,,,,,K+xoVEvuI02ozSD2zw37cQ,dOxninhx50WjRMbSb0UpMw,,,N,0,0,,,2010-08-08 13:19,2010-08-17 15:42,admin,admin,2010-08-15 16:00,2010-08-15 16:00,0
29,89772,785,11685,841,0,0,N,N,N,CP_Drtn,TT_FinMile,DT_FixedDrtn,RV_OK,TK_NotStart,A1260,submittals of all tank's shop drawings,,32,0,0,0,0,0,0,0,0,0,,,,2010-07-13 16:00,2010-07-13 16:00,,2010-07-08 16:00,2010-07-08 16:00,2010-07-08 16:00,2010-07-08 16:00,2010-07-08 16:00,2010-07-08 16:00,,2010-07-13 16:00,2010-07-13 16:00,,PT_Normal,,,,,Ga2RaQ04KEemZ7uLdpQZJQ,,,,N,0,0,,,2010-08-08 13:19,2010-08-18 21:34,admin,admin,2010-07-08 16:00,2010-07-08 16:00,0
30,89773,785,11705,841,1,0,N,N,N,CP_Drtn,TT_Task,DT_FixedDUR2,RV_OK,TK_NotStart,A1270,Formwork For R.C raft,,128,0,48,0,96,96,48,0,0,0,,,,2010-08-17 08:00,2010-08-23 16:00,,2010-07-29 08:00,2010-08-04 16:00,2010-07-29 08:00,2010-08-04 16:00,2010-07-29 08:00,2010-08-04 16:00,,2010-08-17 08:00,2010-08-23 16:00,,PT_Normal,,,,,nManlfIoTkO/fJlb3FvjOg,KSwE7YwUmUqqecUVkViLaA,,,N,0,0,,,2010-08-08 13:19,2010-08-17 15:42,admin,admin,2010-07-29 08:00,2010-08-04 16:00,48
31,89774,785,11705,841,1,0,N,N,N,CP_Drtn,TT_Task,DT_FixedDUR2,RV_OK,TK_NotStart,A1280,Rebar For R.C raft,2117,128,0,40,0,704,704,40,0,0,0,,,,2010-08-19 08:00,2010-08-24 16:00,,2010-08-01 08:00,2010-08-05 16:00,2010-08-01 08:00,2010-08-05 16:00,2010-08-01 08:00,2010-08-05 16:00,,2010-08-19 08:00,2010-08-24 16:00,,PT_Normal,,,,,fG9uJpwb0U2y0lK9pSqqDQ,Uzrz/TT09UWE38N3bcBUZw,,,N,0,0,,,2010-08-08 13:19,2010-08-17 15:42,admin,admin,2010-08-01 08:00,2010-08-05 16:00,40
32,89775,785,11705,841,0,0,N,N,N,CP_Drtn,TT_FinMile,DT_FixedDrtn,RV_OK,TK_NotStart,A1290,M&E conduits For R.C raft (by others),,143.983333333333,15.9833333333333,0,0,0,0,0,0,0,0,,,,2010-08-23 16:00,2010-08-23 16:00,,2010-08-03 08:01,2010-08-03 08:01,2010-08-03 08:01,2010-08-03 08:01,2010-08-03 08:01,2010-08-03 08:01,,2010-08-23 16:00,2010-08-23 16:00,,PT_Normal,,,,,b8sTCZOVsUuiKCGlk8QKXg,GqZinMri3E2y5aGgfjWpKw,,,N,0,0,,,2010-08-08 13:19,2010-08-18 21:33,admin,admin,2010-08-03 08:01,2010-08-03 08:01,0
33,89776,785,11705,841,1,0,N,N,N,CP_Drtn,TT_Task,DT_FixedDUR2,RV_OK,TK_NotStart,A1300,Pouring For R.C raft,2120,128,0,8,0,56,56,8,0,0,0,,,,2010-08-25 08:00,2010-08-25 16:00,,2010-08-07 08:00,2010-08-07 16:00,2010-08-07 08:00,2010-08-07 16:00,2010-08-07 08:00,2010-08-07 16:00,,2010-08-25 08:00,2010-08-25 16:00,,PT_Normal,,,,,oFow8hNqEUelcT/w6CVfEw,Rp8pamtKdUy6B1Oj/YK8rQ,,,N,0,0,,,2010-08-08 13:19,2010-08-17 15:42,admin,admin,2010-08-07 08:00,2010-08-07 16:00,8
34,89777,785,11706,841,1,0,N,N,N,CP_Drtn,TT_Task,DT_FixedDUR2,RV_OK,TK_NotStart,A1360,Formwork For basement walls & col.,,128,0,64,0,480,480,64,0,0,0,,,,2010-09-01 08:00,2010-09-11 16:00,,2010-08-14 08:00,2010-08-22 16:00,2010-08-14 08:00,2010-08-22 16:00,2010-08-14 08:00,2010-08-22 16:00,,2010-09-01 08:00,2010-09-11 16:00,,PT_Normal,,,,,L+6ee5Hq30e47LNGOqIOPw,4puRAphjvUerwsCJV9pKcA,,,N,0,0,,,2010-08-08 13:19,2010-08-18 04:00,admin,admin,2010-08-14 08:00,2010-08-22 16:00,64
35,89778,785,11706,841,1,0,N,N,N,CP_Drtn,TT_Task,DT_FixedDUR2,RV_OK,TK_NotStart,A1370,Rebar For  basement walls & col.,2117,144,16,32,0,480,480,32,0,0,0,,,,2010-09-06 08:00,2010-09-11 16:00,,2010-08-16 08:00,2010-08-19 16:00,2010-08-16 08:00,2010-08-19 16:00,2010-08-16 08:00,2010-08-19 16:00,,2010-09-06 08:00,2010-09-11 16:00,,PT_Normal,,,,,MNa22VIFF0eGVtf6ANW26w,T9nrabQ9F0GAUut/6Y1g+g,,,N,0,0,,,2010-08-08 13:19,2010-08-18 04:00,admin,admin,2010-08-16 08:00,2010-08-19 16:00,32
36,89779,785,11706,841,1,0,N,N,N,CP_Drtn,TT_Task,DT_FixedDUR2,RV_OK,TK_NotStart,A1380,Pouring For  basement walls & col.,,128,0,8,0,32,32,8,0,0,0,,,,2010-09-12 08:00,2010-09-12 16:00,,2010-08-23 08:00,2010-08-23 16:00,2010-08-23 08:00,2010-08-23 16:00,2010-08-23 08:00,2010-08-23 16:00,,2010-09-12 08:00,2010-09-12 16:00,,PT_Normal,,,,,wVYmA93Ap0eceLvbL1Tblw,lCbRZJlYOUG01dCRKtOpJw,,,N,0,0,,,2010-08-08 13:19,2010-08-18 04:00,admin,admin,2010-08-23 08:00,2010-08-23 16:00,8
37,89780,785,11723,841,1,0,N,N,N,CP_Drtn,TT_Task,DT_FixedDUR2,RV_OK,TK_NotStart,A1310,Isolation For Foundation bituminous emulsion,,152,24,32,0,80,80,32,0,0,0,,,,2010-09-19 08:00,2010-09-22 16:00,,2010-08-26 08:00,2010-08-30 16:00,2010-08-26 08:00,2010-08-30 16:00,2010-08-26 08:00,2010-08-30 16:00,,2010-09-19 08:00,2010-09-22 16:00,,PT_Normal,,,,,PQCRtDCk702R/lBger9dFw,VGVXUApaM0OXbbDyK3pNNw,,,N,0,0,,,2010-08-08 13:19,2010-08-18 04:00,admin,admin,2010-08-26 08:00,2010-08-30 16:00,32
38,89781,785,11707,841,1,0,N,N,N,CP_Drtn,TT_Task,DT_FixedDUR2,RV_OK,TK_NotStart,A1390,Formwork For basement Slab & stairs,,0,0,48,0,960,960,48,0,0,0,,,,2010-09-21 08:00,2010-09-27 16:00,,2010-09-21 08:00,2010-09-27 16:00,2010-09-21 08:00,2010-09-27 16:00,2010-09-21 08:00,2010-09-27 16:00,,2010-09-21 08:00,2010-09-27 16:00,,PT_Normal,,,,,Gu6DoNuxskedDYGEAI4S2A,9f1vwk6UHk6Vi+TyTUGTGw,,,Y,0,0,,,2010-08-08 13:19,2010-08-18 21:34,admin,admin,2010-09-21 08:00,2010-09-27 16:00,48
39,89782,785,11707,841,1,0,N,N,N,CP_Drtn,TT_Task,DT_FixedDUR2,RV_OK,TK_NotStart,A1400,Rebar For basement Slab & stairs,2117,0,0,24,0,360,360,24,0,0,0,,,,2010-09-26 08:00,2010-09-28 16:00,,2010-09-26 08:00,2010-09-28 16:00,2010-09-26 08:00,2010-09-28 16:00,2010-09-26 08:00,2010-09-28 16:00,,2010-09-26 08:00,2010-09-28 16:00,,PT_Normal,,,,,hcwBMreAo0+R3VHkfq+gHg,roR73HuCP0mbbyAfyvuxQA,,,Y,0,0,,,2010-08-08 13:19,2010-08-18 21:34,admin,admin,2010-09-26 08:00,2010-09-28 16:00,24
40,89783,785,11707,841,0,0,N,N,N,CP_Drtn,TT_FinMile,DT_FixedDrtn,RV_OK,TK_NotStart,A1410,M&E conduits For basement Slab & stairs (by others),,7.98333333333333,7.98333333333333,0,0,0,0,0,0,0,0,,,,2010-09-27 16:00,2010-09-27 16:00,,2010-09-27 08:01,2010-09-27 08:01,2010-09-27 08:01,2010-09-27 08:01,2010-09-27 08:01,2010-09-27 08:01,,2010-09-27 16:00,2010-09-27 16:00,,PT_Normal,,,,,sqL8VqvcAEOagdSEOpsdKQ,gs2xt8ylX0ajjcdGOgVDLA,,,N,0,0,,,2010-08-08 13:19,2010-08-18 21:33,admin,admin,2010-09-27 08:01,2010-09-27 08:01,0
41,89784,785,11707,841,1,0,N,N,N,CP_Drtn,TT_Task,DT_FixedDUR2,RV_OK,TK_NotStart,A1420,Pouring For basement Slab & stairs,,0,0,8,0,32,32,8,0,0,0,,,,2010-09-29 08:00,2010-09-29 16:00,,2010-09-29 08:00,2010-09-29 16:00,2010-09-29 08:00,2010-09-29 16:00,2010-09-29 08:00,2010-09-29 16:00,,2010-09-29 08:00,2010-09-29 16:00,,PT_Normal,,,,,iexbxUfCTkKAdBuVzBAbJw,/9tMymGiw0u2qjy6k2AT4g,,,Y,0,0,,,2010-08-08 13:19,2010-08-18 21:34,admin,admin,2010-09-29 08:00,2010-09-29 16:00,8
42,89785,785,11723,841,1,0,N,N,N,CP_Drtn,TT_Task,DT_FixedDUR2,RV_OK,TK_NotStart,A1340,Water proofing bituminous membrane,,128,0,32,0,320,320,32,0,0,0,,,,2010-09-14 08:00,2010-09-18 16:00,,2010-08-25 08:00,2010-08-29 16:00,2010-08-25 08:00,2010-08-29 16:00,2010-08-25 08:00,2010-08-29 16:00,,2010-09-14 08:00,2010-09-18 16:00,,PT_Normal,,,,,wfifNI3tR0Kr4YwxfooiXQ,dabcmXSoiU+1eupafA3y4Q,,,N,0,0,,,2010-08-08 13:19,2010-08-18 04:00,admin,admin,2010-08-25 08:00,2010-08-29 16:00,32
43,89786,785,11723,841,1,0,N,N,N,CP_Drtn,TT_Task,DT_FixedDUR2,RV_OK,TK_NotStart,A1350,Water proofing protection layer cartonal,2121,128,0,32,0,320,320,32,0,0,0,,,,2010-09-19 08:00,2010-09-22 16:00,,2010-08-30 08:00,2010-09-02 16:00,2010-08-30 08:00,2010-09-02 16:00,2010-08-30 08:00,2010-09-02 16:00,,2010-09-19 08:00,2010-09-22 16:00,,PT_Normal,,,,,wH5mMi/6WkynCVfMO8Xdsw,6BZKnFa9LEOyu+rPOYfPfg,,,N,0,0,,,2010-08-08 13:19,2010-08-18 04:00,admin,admin,2010-08-30 08:00,2010-09-02 16:00,32
44,89787,785,11692,841,0,0,N,N,N,CP_Drtn,TT_FinMile,DT_FixedDrtn,RV_OK,TK_NotStart,A1141,Approval of All R.C raft dimension,,8,0,0,0,0,0,0,0,0,0,,,,2010-07-06 16:00,2010-07-06 16:00,,2010-07-05 16:00,2010-07-05 16:00,2010-07-05 16:00,2010-07-05 16:00,2010-07-05 16:00,2010-07-05 16:00,,2010-07-06 16:00,2010-07-06 16:00,,PT_Normal,,,,,q8gFAr9KJEaFg0fGguhPLg,,,,N,0,0,,,2010-08-08 13:19,2010-08-17 15:42,admin,admin,2010-07-05 16:00,2010-07-05 16:00,0
45,89788,785,11692,841,0,0,N,N,N,CP_Drtn,TT_FinMile,DT_FixedDrtn,RV_OK,TK_NotStart,A1151,Approval of All column layout,,8,0,0,0,0,0,0,0,0,0,,,,2010-07-06 16:00,2010-07-06 16:00,,2010-07-05 16:00,2010-07-05 16:00,2010-07-05 16:00,2010-07-05 16:00,2010-07-05 16:00,2010-07-05 16:00,,2010-07-06 16:00,2010-07-06 16:00,,PT_Normal,,,,,/YJJCuBp2UWKYFnO0BYjjQ,,,,N,0,0,,,2010-08-08 13:19,2010-08-17 15:42,admin,admin,2010-07-05 16:00,2010-07-05 16:00,0
46,89789,785,11692,841,0,0,N,N,N,CP_Drtn,TT_FinMile,DT_FixedDrtn,RV_OK,TK_NotStart,A1161,Approval of All R.C raft RFT&starters,,0,0,0,0,0,0,0,0,0,0,,,,2010-07-14 16:00,2010-07-14 16:00,,2010-07-14 16:00,2010-07-14 16:00,2010-07-14 16:00,2010-07-14 16:00,2010-07-14 16:00,2010-07-14 16:00,,2010-07-14 16:00,2010-07-14 16:00,,PT_Normal,,,,,Tv9pR6dBu0anKAQ0ik/1wQ,,,,Y,0,0,,,2010-08-08 13:19,2010-08-18 21:34,admin,admin,2010-07-14 16:00,2010-07-14 16:00,0
47,89790,785,11692,841,0,0,N,N,N,CP_Drtn,TT_FinMile,DT_FixedDrtn,RV_OK,TK_NotStart,A1171,Approval of All basement columns & walls RFT,,40,40,0,0,0,0,0,0,0,0,,,,2010-07-31 16:00,2010-07-31 16:00,,2010-07-25 16:00,2010-07-25 16:00,2010-07-25 16:00,2010-07-25 16:00,2010-07-25 16:00,2010-07-25 16:00,,2010-07-31 16:00,2010-07-31 16:00,,PT_Normal,,,,,naf0pzlwsUS+2noxL0gqpw,,,,N,0,0,,,2010-08-08 13:19,2010-08-17 15:42,admin,admin,2010-07-25 16:00,2010-07-25 16:00,0
48,89791,785,11692,841,0,0,N,N,N,CP_Drtn,TT_FinMile,DT_FixedDrtn,RV_OK,TK_NotStart,A1181,Approval of All basement slab concrete dimension,,32,32,0,0,0,0,0,0,0,0,,,,2010-08-05 16:00,2010-08-05 16:00,,2010-08-01 16:00,2010-08-01 16:00,2010-08-01 16:00,2010-08-01 16:00,2010-08-01 16:00,2010-08-01 16:00,,2010-08-05 16:00,2010-08-05 16:00,,PT_Normal,,,,,pQz5LuVoLkq7zRSoRgEjTA,,,,N,0,0,,,2010-08-08 13:19,2010-08-17 15:42,admin,admin,2010-08-01 16:00,2010-08-01 16:00,0
49,89792,785,11692,841,0,0,N,N,N,CP_Drtn,TT_FinMile,DT_FixedDrtn,RV_OK,TK_NotStart,A1191,Approval of All basement slab RFT,,48,40,0,0,0,0,0,0,0,0,,,,2010-08-15 16:00,2010-08-15 16:00,,2010-08-08 16:00,2010-08-08 16:00,2010-08-08 16:00,2010-08-08 16:00,2010-08-08 16:00,2010-08-08 16:00,,2010-08-15 16:00,2010-08-15 16:00,,PT_Normal,,,,,Wn/qj48SxUmlGcY9QLcr8Q,,,,N,0,0,,,2010-08-08 13:19,2010-08-17 15:42,admin,admin,2010-08-08 16:00,2010-08-08 16:00,0
50,89793,785,11711,841,1,0,N,N,N,CP_Drtn,TT_Task,DT_FixedDUR2,RV_OK,TK_NotStart,A1430,Formwork For R.C raft,,80,0,48,0,96,96,48,0,0,0,,,,2010-07-18 08:00,2010-07-24 16:00,,2010-07-06 08:00,2010-07-12 16:00,2010-07-06 08:00,2010-07-12 16:00,2010-07-06 08:00,2010-07-12 16:00,,2010-07-18 08:00,2010-07-24 16:00,,PT_Normal,,,,,OLH+iHHT/kivAsJLg4i35A,4x+kJ7KF7kuHSwWyUB3Urg,,,N,0,0,,,2010-08-08 13:19,2010-08-17 15:44,admin,admin,2010-07-06 08:00,2010-07-12 16:00,48
51,89794,785,11711,841,1,0,N,N,N,CP_Drtn,TT_Task,DT_FixedDUR2,RV_OK,TK_NotStart,A1440,Rebar For R.C raft,2117,32,0,40,0,704,704,40,0,0,0,,,,2010-07-20 08:00,2010-07-25 16:00,,2010-07-15 08:00,2010-07-20 16:00,2010-07-15 08:00,2010-07-20 16:00,2010-07-15 08:00,2010-07-20 16:00,,2010-07-20 08:00,2010-07-25 16:00,,PT_Normal,,,,,nLa4275mgke9iV9pG0XGow,tVDQbqqwCkaPMIPI3Ku3Ig,,,N,0,0,,,2010-08-08 13:19,2010-08-17 15:44,admin,admin,2010-07-15 08:00,2010-07-20 16:00,40
52,89795,785,11711,841,0,0,N,N,N,CP_Drtn,TT_FinMile,DT_FixedDrtn,RV_OK,TK_NotStart,A1450,M&E conduits For R.C raft (by others),,39.9833333333333,7.98333333333333,0,0,0,0,0,0,0,0,,,,2010-07-24 16:00,2010-07-24 16:00,,2010-07-19 08:01,2010-07-19 08:01,2010-07-19 08:01,2010-07-19 08:01,2010-07-19 08:01,2010-07-19 08:01,,2010-07-24 16:00,2010-07-24 16:00,,PT_Normal,,,,,9F9ID1Lnu0Ss5XrejDIozA,KQNnTgfyDUuNo+Obe3s40g,,,N,0,0,,,2010-08-08 13:19,2010-08-18 21:33,admin,admin,2010-07-19 08:01,2010-07-19 08:01,0
53,89796,785,11711,841,1,0,N,N,N,CP_Drtn,TT_Task,DT_FixedDUR2,RV_OK,TK_NotStart,A1460,Pouring For R.C raft,,32,0,8,0,56,56,8,0,0,0,,,,2010-07-26 08:00,2010-07-26 16:00,,2010-07-21 08:00,2010-07-21 16:00,2010-07-21 08:00,2010-07-21 16:00,2010-07-21 08:00,2010-07-21 16:00,,2010-07-26 08:00,2010-07-26 16:00,,PT_Normal,,,,,JLm3OwDnFE6yLq5+VhWg0g,CvUGKg6UlE2iyPXobLVimQ,,,N,0,0,,,2010-08-08 13:19,2010-08-17 15:44,admin,admin,2010-07-21 08:00,2010-07-21 16:00,8
54,89797,785,11712,841,1,0,N,N,N,CP_Drtn,TT_Task,DT_FixedDUR2,RV_OK,TK_NotStart,A1510,Formwork For basement walls & col.,,32,0,72,0,480,480,72,0,0,0,,,,2010-07-31 08:00,2010-08-09 16:00,,2010-07-26 08:00,2010-08-04 16:00,2010-07-26 08:00,2010-08-04 16:00,2010-07-26 08:00,2010-08-04 16:00,,2010-07-31 08:00,2010-08-09 16:00,,PT_Normal,,,,,KtlIh2YqskKOTPkGlI2r3g,GOjZxpQv/Ei6kE0bDr6VKw,,,N,0,0,,,2010-08-08 13:19,2010-08-17 15:44,admin,admin,2010-07-26 08:00,2010-08-04 16:00,72
55,89798,785,11712,841,1,0,N,N,N,CP_Drtn,TT_Task,DT_FixedDUR2,RV_OK,TK_NotStart,A1520,Rebar For  basement walls & col.,2117,32,0,32,0,480,480,32,0,0,0,,,,2010-08-05 08:00,2010-08-09 16:00,,2010-08-01 08:00,2010-08-04 16:00,2010-08-01 08:00,2010-08-04 16:00,2010-08-01 08:00,2010-08-04 16:00,,2010-08-05 08:00,2010-08-09 16:00,,PT_Normal,,,,,0TbupOvADk2SetO3G9lhQg,GQNf4uU1YESh4F3EqqXeAQ,,,N,0,0,,,2010-08-08 13:19,2010-08-17 15:42,admin,admin,2010-08-01 08:00,2010-08-04 16:00,32
56,89799,785,11712,841,1,0,N,N,N,CP_Drtn,TT_Task,DT_FixedDUR2,RV_OK,TK_NotStart,A1530,Pouring For  basement walls & col.,,32,0,8,0,32,32,8,0,0,0,,,,2010-08-10 08:00,2010-08-10 16:00,,2010-08-05 08:00,2010-08-05 16:00,2010-08-05 08:00,2010-08-05 16:00,2010-08-05 08:00,2010-08-05 16:00,,2010-08-10 08:00,2010-08-10 16:00,,PT_Normal,,,,,TAlZAjZpy0OCG9Ryo2wOnA,aJclw+JHeU6keFVbVTkSMg,,,N,0,0,,,2010-08-08 13:19,2010-08-17 15:42,admin,admin,2010-08-05 08:00,2010-08-05 16:00,8
57,89800,785,11725,841,1,0,N,N,N,CP_Drtn,TT_Task,DT_FixedDUR2,RV_OK,TK_NotStart,A1470,Isolation For Foundation bituminous emulsion,,232,104,64,0,80,80,64,0,0,0,,,,2010-09-14 08:00,2010-09-22 16:00,,2010-08-10 08:00,2010-08-18 16:00,2010-08-10 08:00,2010-08-18 16:00,2010-08-10 08:00,2010-08-18 16:00,,2010-09-14 08:00,2010-09-22 16:00,,PT_Normal,,,,,BYrYe082H0ukLTKptLmRuQ,+ba5kzKnEUCw2+JrB+ng1g,,,N,0,0,,,2010-08-08 13:19,2010-08-18 04:00,admin,admin,2010-08-10 08:00,2010-08-18 16:00,64
58,89801,785,11713,841,1,0,N,N,N,CP_Drtn,TT_Task,DT_FixedDUR2,RV_OK,TK_NotStart,A1540,Formwork For basement Slab & stairs,,32,0,64,0,960,960,64,0,0,0,,,,2010-08-12 08:00,2010-08-21 16:00,,2010-08-08 08:00,2010-08-16 16:00,2010-08-08 08:00,2010-08-16 16:00,2010-08-08 08:00,2010-08-16 16:00,,2010-08-12 08:00,2010-08-21 16:00,,PT_Normal,,,,,cqhq3UM5BEqCChQ67cje4A,AeysbMhBPE6+4sfTisnW6Q,,,N,0,0,,,2010-08-08 13:19,2010-08-17 15:42,admin,admin,2010-08-08 08:00,2010-08-16 16:00,64
59,89802,785,11713,841,1,0,N,N,N,CP_Drtn,TT_Task,DT_FixedDUR2,RV_OK,TK_NotStart,A1550,Rebar For basement Slab & stairs,2117,32,0,40,0,360,360,40,0,0,0,,,,2010-08-19 08:00,2010-08-24 16:00,,2010-08-15 08:00,2010-08-19 16:00,2010-08-15 08:00,2010-08-19 16:00,2010-08-15 08:00,2010-08-19 16:00,,2010-08-19 08:00,2010-08-24 16:00,,PT_Normal,,,,,97S/hzNAeE62XmoH0o5TOg,uI52fxSih0S/NfRVjzsNXQ,,,N,0,0,,,2010-08-08 13:19,2010-08-17 15:42,admin,admin,2010-08-15 08:00,2010-08-19 16:00,40
60,89803,785,11713,841,0,0,N,N,N,CP_Drtn,TT_FinMile,DT_FixedDrtn,RV_OK,TK_NotStart,A1560,M&E conduits For Ground Floor Slab & stairs (by others),,39.9833333333333,7.98333333333333,0,0,0,0,0,0,0,0,,,,2010-08-23 16:00,2010-08-23 16:00,,2010-08-18 08:01,2010-08-18 08:01,2010-08-18 08:01,2010-08-18 08:01,2010-08-18 08:01,2010-08-18 08:01,,2010-08-23 16:00,2010-08-23 16:00,,PT_Normal,,,,,HeR8iHd1iUWHeNKctPd69A,UaOaQpa4w0yhgeGpfzihug,,,N,0,0,,,2010-08-08 13:19,2010-08-18 21:33,admin,admin,2010-08-18 08:01,2010-08-18 08:01,0
61,89804,785,11713,841,1,0,N,N,N,CP_Drtn,TT_Task,DT_FixedDUR2,RV_OK,TK_NotStart,A1570,Pouring For basement Slab & stairs,,32,0,8,0,32,32,8,0,0,0,,,,2010-08-25 08:00,2010-08-25 16:00,,2010-08-21 08:00,2010-08-21 16:00,2010-08-21 08:00,2010-08-21 16:00,2010-08-21 08:00,2010-08-21 16:00,,2010-08-25 08:00,2010-08-25 16:00,,PT_Normal,,,,,mlWZtOYb6kO003ShpKnWHA,jjls4hg4A0WUYN4Sr4NyfQ,,,N,0,0,,,2010-08-08 13:19,2010-08-17 15:42,admin,admin,2010-08-21 08:00,2010-08-21 16:00,8
62,89805,785,11725,841,1,0,N,N,N,CP_Drtn,TT_Task,DT_FixedDUR2,RV_OK,TK_NotStart,A1490,Water proofing bituminous membrane,,200,0,48,0,240,240,48,0,0,0,,,,2010-09-06 08:00,2010-09-13 16:00,,2010-08-08 08:00,2010-08-14 16:00,2010-08-08 08:00,2010-08-14 16:00,2010-08-08 08:00,2010-08-14 16:00,,2010-09-06 08:00,2010-09-13 16:00,,PT_Normal,,,,,JhZ/NULWcEWRnZNu14znEg,gh9oZEFUmEGKAJswkDstcA,,,N,0,0,,,2010-08-08 13:19,2010-08-18 04:00,admin,admin,2010-08-08 08:00,2010-08-14 16:00,48
63,89806,785,11725,841,1,0,N,N,N,CP_Drtn,TT_Task,DT_FixedDUR2,RV_OK,TK_NotStart,A1500,Water proofing protection layer cartonal,2121,200,72,64,0,240,240,64,0,0,0,,,,2010-09-14 08:00,2010-09-22 16:00,,2010-08-15 08:00,2010-08-23 16:00,2010-08-15 08:00,2010-08-23 16:00,2010-08-15 08:00,2010-08-23 16:00,,2010-09-14 08:00,2010-09-22 16:00,,PT_Normal,,,,,yk2ogzWu4ESn15wfqaFeRg,t2s639eVtUGDtSLqYBs9RA,,,N,0,0,,,2010-08-08 13:19,2010-08-18 04:00,admin,admin,2010-08-15 08:00,2010-08-23 16:00,64
64,89809,785,11681,841,0,0,N,N,N,CP_Drtn,TT_Mile,DT_FixedDrtn,RV_OK,TK_NotStart,A1320,Receive issue for construction drawings,,15.9833333333333,8,0,0,0,0,0,0,0,0,,,,2010-07-03 15:59,2010-07-03 15:59,,2010-07-01 08:00,2010-07-01 08:00,2010-07-01 08:00,2010-07-01 08:00,2010-07-01 08:00,2010-07-01 08:00,,2010-07-03 15:59,2010-07-03 15:59,,PT_Normal,,,,,WSUZzAN0AUmZTIDz8tjFig,,,,N,0,0,,,2010-08-08 13:19,2010-08-18 21:33,admin,admin,2010-07-01 08:00,2010-07-01 08:00,0
65,89810,785,11717,841,1,0,N,N,N,CP_Drtn,TT_Task,DT_FixedDUR2,RV_OK,TK_NotStart,A1600,Formwork For R.C raft,,8,0,64,0,288,288,64,0,0,0,,,,2010-07-20 08:00,2010-07-28 16:00,,2010-07-19 08:00,2010-07-27 16:00,2010-07-19 08:00,2010-07-27 16:00,2010-07-19 08:00,2010-07-27 16:00,,2010-07-20 08:00,2010-07-28 16:00,,PT_Normal,,,,,73A2XL/F20evqDxfRyR9UA,KSwE7YwUmUqqecUVkViLaA,,,N,0,0,,,2010-08-08 13:19,2010-08-17 15:42,admin,admin,2010-07-19 08:00,2010-07-27 16:00,64
66,89811,785,11717,841,1,0,N,N,N,CP_Drtn,TT_Task,DT_FixedDUR2,RV_OK,TK_NotStart,A1610,Rebar For R.C raft,2117,56,0,56,0,2080,2080,56,0,0,0,,,,2010-08-03 08:00,2010-08-10 16:00,,2010-07-26 08:00,2010-08-02 16:00,2010-07-26 08:00,2010-08-02 16:00,2010-07-26 08:00,2010-08-02 16:00,,2010-08-03 08:00,2010-08-10 16:00,,PT_Normal,,,,,7R2Bzgn4v0igXAl0WNGOeg,Uzrz/TT09UWE38N3bcBUZw,,,N,0,0,,,2010-08-08 13:19,2010-08-17 15:42,admin,admin,2010-07-26 08:00,2010-08-02 16:00,56
67,89812,785,11717,841,0,0,N,N,N,CP_Drtn,TT_FinMile,DT_FixedDrtn,RV_OK,TK_NotStart,A1620,M&E conduits For R.C raft (by others),,63.9833333333333,7.98333333333333,0,0,0,0,0,0,0,0,,,,2010-08-09 16:00,2010-08-09 16:00,,2010-08-01 08:01,2010-08-01 08:01,2010-08-01 08:01,2010-08-01 08:01,2010-08-01 08:01,2010-08-01 08:01,,2010-08-09 16:00,2010-08-09 16:00,,PT_Normal,,,,,Tb0LhghDtEqH4oXlA0T1AA,GqZinMri3E2y5aGgfjWpKw,,,N,0,0,,,2010-08-08 13:19,2010-08-18 21:33,admin,admin,2010-08-01 08:01,2010-08-01 08:01,0
68,89813,785,11717,841,1,0,N,N,N,CP_Drtn,TT_Task,DT_FixedDUR2,RV_OK,TK_NotStart,A1630,Pouring For R.C raft,,56,0,16,0,168,168,16,0,0,0,,,,2010-08-11 08:00,2010-08-12 16:00,,2010-08-03 08:00,2010-08-04 16:00,2010-08-03 08:00,2010-08-04 16:00,2010-08-03 08:00,2010-08-04 16:00,,2010-08-11 08:00,2010-08-12 16:00,,PT_Normal,,,,,AFF+Wpkkm0mkKSKV2davdg,Rp8pamtKdUy6B1Oj/YK8rQ,,,N,0,0,,,2010-08-08 13:19,2010-08-17 15:42,admin,admin,2010-08-03 08:00,2010-08-04 16:00,16
69,89814,785,11718,841,1,0,N,N,N,CP_Drtn,TT_Task,DT_FixedDUR2,RV_OK,TK_NotStart,A1640,Formwork For basement walls & col.,,56,0,80,0,1440,1440,80,0,0,0,,,,2010-08-15 08:00,2010-08-25 16:00,,2010-08-07 08:00,2010-08-17 16:00,2010-08-07 08:00,2010-08-17 16:00,2010-08-07 08:00,2010-08-17 16:00,,2010-08-15 08:00,2010-08-25 16:00,,PT_Normal,,,,,v5AWfI/EakOWFBDnfJCnnA,4puRAphjvUerwsCJV9pKcA,,,N,0,0,,,2010-08-08 13:19,2010-08-17 15:42,admin,admin,2010-08-07 08:00,2010-08-17 16:00,80
70,89815,785,11718,841,1,0,N,N,N,CP_Drtn,TT_Task,DT_FixedDUR2,RV_OK,TK_NotStart,A1650,Rebar For  basement walls & col.,2117,72,16,48,0,1440,1440,48,0,0,0,,,,2010-08-19 08:00,2010-08-25 16:00,,2010-08-09 08:00,2010-08-15 16:00,2010-08-09 08:00,2010-08-15 16:00,2010-08-09 08:00,2010-08-15 16:00,,2010-08-19 08:00,2010-08-25 16:00,,PT_Normal,,,,,QcQ4tBnFNU+FMdUG3jGcDQ,T9nrabQ9F0GAUut/6Y1g+g,,,N,0,0,,,2010-08-08 13:19,2010-08-17 15:42,admin,admin,2010-08-09 08:00,2010-08-15 16:00,48
71,89816,785,11718,841,1,0,N,N,N,CP_Drtn,TT_Task,DT_FixedDUR2,RV_OK,TK_NotStart,A1660,Pouring For  basement walls & col.,,56,0,8,0,96,96,8,0,0,0,,,,2010-08-26 08:00,2010-08-26 16:00,,2010-08-18 08:00,2010-08-18 16:00,2010-08-18 08:00,2010-08-18 16:00,2010-08-18 08:00,2010-08-18 16:00,,2010-08-26 08:00,2010-08-26 16:00,,PT_Normal,,,,,kzACA8DAa0GVqNxGbU3Qlg,lCbRZJlYOUG01dCRKtOpJw,,,N,0,0,,,2010-08-08 13:19,2010-08-17 15:42,admin,admin,2010-08-18 08:00,2010-08-18 16:00,8
72,89817,785,11727,841,1,0,N,N,N,CP_Drtn,TT_Task,DT_FixedDUR2,RV_OK,TK_NotStart,A1670,Isolation For Foundation bituminous emulsion,,160,152,64,0,240,240,64,0,0,0,,,,2010-09-13 08:00,2010-09-21 16:00,,2010-08-19 08:00,2010-08-28 16:00,2010-08-19 08:00,2010-08-28 16:00,2010-08-19 08:00,2010-08-28 16:00,,2010-09-13 08:00,2010-09-21 16:00,,PT_Normal,,,,,Nqsl0fXH/UK9eJtKXxJsfA,VGVXUApaM0OXbbDyK3pNNw,,,N,0,0,,,2010-08-08 13:19,2010-08-18 04:00,admin,admin,2010-08-19 08:00,2010-08-28 16:00,64
73,89818,785,11719,841,1,0,N,N,N,CP_Drtn,TT_Task,DT_FixedDUR2,RV_OK,TK_NotStart,A1700,Rebar For basement Slab & stairs,2117,0,0,48,0,1080,1080,48,0,0,0,,,,2010-09-07 08:00,2010-09-14 16:00,,2010-09-07 08:00,2010-09-14 16:00,2010-09-07 08:00,2010-09-14 16:00,2010-09-07 08:00,2010-09-14 16:00,,2010-09-07 08:00,2010-09-14 16:00,,PT_Normal,,,,,T2IxQLix3Ey/H/6HCDNxLg,roR73HuCP0mbbyAfyvuxQA,,,Y,0,0,,,2010-08-08 13:19,2010-08-18 21:34,admin,admin,2010-09-07 08:00,2010-09-14 16:00,48
74,89819,785,11719,841,0,0,N,N,N,CP_Drtn,TT_FinMile,DT_FixedDrtn,RV_OK,TK_NotStart,A1710,M&E conduits For basement Slab & stairs (by others),,7.98333333333333,7.98333333333333,0,0,0,0,0,0,0,0,,,,2010-09-13 16:00,2010-09-13 16:00,,2010-09-13 08:01,2010-09-13 08:01,2010-09-13 08:01,2010-09-13 08:01,2010-09-13 08:01,2010-09-13 08:01,,2010-09-13 16:00,2010-09-13 16:00,,PT_Normal,,,,,l5dlq0mkeUWhH/azPi5+cg,gs2xt8ylX0ajjcdGOgVDLA,,,N,0,0,,,2010-08-08 13:19,2010-08-18 21:33,admin,admin,2010-09-13 08:01,2010-09-13 08:01,0
75,89820,785,11719,841,1,0,N,N,N,CP_Drtn,TT_Task,DT_FixedDUR2,RV_OK,TK_NotStart,A1720,Pouring For basement Slab & stairs,,0,0,8,0,96,96,8,0,0,0,,,,2010-09-15 08:00,2010-09-15 16:00,,2010-09-15 08:00,2010-09-15 16:00,2010-09-15 08:00,2010-09-15 16:00,2010-09-15 08:00,2010-09-15 16:00,,2010-09-15 08:00,2010-09-15 16:00,,PT_Normal,,,,,HvEc1QAsAkmt2y6hB94kRQ,/9tMymGiw0u2qjy6k2AT4g,,,Y,0,0,,,2010-08-08 13:19,2010-08-18 21:34,admin,admin,2010-09-15 08:00,2010-09-15 16:00,8
76,89821,785,11727,841,1,0,N,N,N,CP_Drtn,TT_Task,DT_FixedDUR2,RV_OK,TK_NotStart,A1740,Water proofing bituminous membrane,,112,0,56,0,720,720,56,0,0,0,,,,2010-09-06 08:00,2010-09-14 16:00,,2010-08-21 08:00,2010-08-28 16:00,2010-08-21 08:00,2010-08-28 16:00,2010-08-21 08:00,2010-08-28 16:00,,2010-09-06 08:00,2010-09-14 16:00,,PT_Normal,,,,,/KG6/tXIuU6H71SivRP/IA,dabcmXSoiU+1eupafA3y4Q,,,N,0,0,,,2010-08-08 13:19,2010-08-18 04:00,admin,admin,2010-08-21 08:00,2010-08-28 16:00,56
77,89822,785,11727,841,1,0,N,N,N,CP_Drtn,TT_Task,DT_FixedDUR2,RV_OK,TK_NotStart,A1750,Water proofing protection layer cartonal,2121,112,104,48,0,720,720,48,0,0,0,,,,2010-09-15 08:00,2010-09-21 16:00,,2010-08-29 08:00,2010-09-04 16:00,2010-08-29 08:00,2010-09-04 16:00,2010-08-29 08:00,2010-09-04 16:00,,2010-09-15 08:00,2010-09-21 16:00,,PT_Normal,,,,,exYitEfW0kegwrZFPG35uQ,6BZKnFa9LEOyu+rPOYfPfg,,,N,0,0,,,2010-08-08 13:19,2010-08-18 04:00,admin,admin,2010-08-29 08:00,2010-09-04 16:00,48
78,89823,785,11714,841,1,0,N,N,N,CP_Drtn,TT_Task,DT_FixedDUR2,RV_OK,TK_NotStart,A1760,Formwork For R.C raft,,104,48,48,0,96,96,48,0,0,0,,,,2010-08-01 08:00,2010-08-07 16:00,,2010-07-17 08:00,2010-07-22 16:00,2010-07-17 08:00,2010-07-22 16:00,2010-07-17 08:00,2010-07-22 16:00,,2010-08-01 08:00,2010-08-07 16:00,,PT_Normal,,,,,LZ00HJUDQEi1xMrQZAv1kA,4x+kJ7KF7kuHSwWyUB3Urg,,,N,0,0,,,2010-08-08 13:19,2010-08-17 15:42,admin,admin,2010-07-17 08:00,2010-07-22 16:00,48
79,89824,785,11714,841,1,0,N,N,N,CP_Drtn,TT_Task,DT_FixedDUR2,RV_OK,TK_NotStart,A1770,Rebar For R.C raft,2117,56,0,40,0,704,704,40,0,0,0,,,,2010-08-03 08:00,2010-08-08 16:00,,2010-07-26 08:00,2010-07-31 16:00,2010-07-26 08:00,2010-07-31 16:00,2010-07-26 08:00,2010-07-31 16:00,,2010-08-03 08:00,2010-08-08 16:00,,PT_Normal,,,,,bXclhwucckOYknvCfZ57DA,tVDQbqqwCkaPMIPI3Ku3Ig,,,N,0,0,,,2010-08-08 13:19,2010-08-17 15:42,admin,admin,2010-07-26 08:00,2010-07-31 16:00,40
80,89825,785,11714,841,0,0,N,N,N,CP_Drtn,TT_FinMile,DT_FixedDrtn,RV_OK,TK_NotStart,A1780,M&E conduits For R.C raft (by others),,63.9833333333333,7.98333333333333,0,0,0,0,0,0,0,0,,,,2010-08-07 16:00,2010-08-07 16:00,,2010-07-29 08:01,2010-07-29 08:01,2010-07-29 08:01,2010-07-29 08:01,2010-07-29 08:01,2010-07-29 08:01,,2010-08-07 16:00,2010-08-07 16:00,,PT_Normal,,,,,/W+/qtFkx0i8i68lWWLgNQ,KQNnTgfyDUuNo+Obe3s40g,,,N,0,0,,,2010-08-08 13:19,2010-08-18 21:33,admin,admin,2010-07-29 08:01,2010-07-29 08:01,0
81,89826,785,11714,841,1,0,N,N,N,CP_Drtn,TT_Task,DT_FixedDUR2,RV_OK,TK_NotStart,A1790,Pouring For R.C raft,,56,0,8,0,56,56,8,0,0,0,,,,2010-08-09 08:00,2010-08-09 16:00,,2010-08-01 08:00,2010-08-01 16:00,2010-08-01 08:00,2010-08-01 16:00,2010-08-01 08:00,2010-08-01 16:00,,2010-08-09 08:00,2010-08-09 16:00,,PT_Normal,,,,,W/8c6020s02qXtSr2wVddA,CvUGKg6UlE2iyPXobLVimQ,,,N,0,0,,,2010-08-08 13:19,2010-08-17 15:42,admin,admin,2010-08-01 08:00,2010-08-01 16:00,8
82,89827,785,11715,841,1,0,N,N,N,CP_Drtn,TT_Task,DT_FixedDUR2,RV_OK,TK_NotStart,A1800,Formwork For basement walls & col.,,56,0,64,0,480,480,64,0,0,0,,,,2010-08-19 08:00,2010-08-28 16:00,,2010-08-11 08:00,2010-08-19 16:00,2010-08-11 08:00,2010-08-19 16:00,2010-08-11 08:00,2010-08-19 16:00,,2010-08-19 08:00,2010-08-28 16:00,,PT_Normal,,,,,MxcZ8vYix0GT4crwHqaisw,GOjZxpQv/Ei6kE0bDr6VKw,,,N,0,0,,,2010-08-08 13:19,2010-08-17 15:42,admin,admin,2010-08-11 08:00,2010-08-19 16:00,64
83,89828,785,11715,841,1,0,N,N,N,CP_Drtn,TT_Task,DT_FixedDUR2,RV_OK,TK_NotStart,A1810,Rebar For  basement walls & col.,2117,72,16,32,0,480,480,32,0,0,0,,,,2010-08-24 08:00,2010-08-28 16:00,,2010-08-14 08:00,2010-08-17 16:00,2010-08-14 08:00,2010-08-17 16:00,2010-08-14 08:00,2010-08-17 16:00,,2010-08-24 08:00,2010-08-28 16:00,,PT_Normal,,,,,+PIolAFN2UmYHGqAzqgAtA,GQNf4uU1YESh4F3EqqXeAQ,,,N,0,0,,,2010-08-08 13:19,2010-08-17 15:42,admin,admin,2010-08-14 08:00,2010-08-17 16:00,32
84,89829,785,11715,841,1,0,N,N,N,CP_Drtn,TT_Task,DT_FixedDUR2,RV_OK,TK_NotStart,A1820,Pouring For  basement walls & col.,,56,0,8,0,32,32,8,0,0,0,,,,2010-08-29 08:00,2010-08-29 16:00,,2010-08-21 08:00,2010-08-21 16:00,2010-08-21 08:00,2010-08-21 16:00,2010-08-21 08:00,2010-08-21 16:00,,2010-08-29 08:00,2010-08-29 16:00,,PT_Normal,,,,,kAJ0oudhAkCrkiMWfjLF7A,aJclw+JHeU6keFVbVTkSMg,,,N,0,0,,,2010-08-08 13:19,2010-08-17 15:42,admin,admin,2010-08-21 08:00,2010-08-21 16:00,8
85,89830,785,11726,841,1,0,N,N,N,CP_Drtn,TT_Task,DT_FixedDUR2,RV_OK,TK_NotStart,A1830,Isolation For Foundation bituminous emulsion,,136,128,48,0,80,80,48,0,0,0,,,,2010-09-15 08:00,2010-09-21 16:00,,2010-08-25 08:00,2010-08-31 16:00,2010-08-25 08:00,2010-08-31 16:00,2010-08-25 08:00,2010-08-31 16:00,,2010-09-15 08:00,2010-09-21 16:00,,PT_Normal,,,,,o1uADweTQU2pLv3psjHgYQ,+ba5kzKnEUCw2+JrB+ng1g,,,N,0,0,,,2010-08-08 13:19,2010-08-18 04:00,admin,admin,2010-08-25 08:00,2010-08-31 16:00,48
86,89831,785,11716,841,1,0,N,N,N,CP_Drtn,TT_Task,DT_FixedDUR2,RV_OK,TK_NotStart,A1840,Formwork For basement Slab & stairs,,32,0,64,0,960,960,64,0,0,0,,,,2010-08-31 08:00,2010-09-08 16:00,,2010-08-26 08:00,2010-09-04 16:00,2010-08-26 08:00,2010-09-04 16:00,2010-08-26 08:00,2010-09-04 16:00,,2010-08-31 08:00,2010-09-08 16:00,,PT_Normal,,,,,Kv5vwgAqQ022RNm39Lc8SQ,AeysbMhBPE6+4sfTisnW6Q,,,N,0,0,,,2010-08-08 13:19,2010-08-18 04:00,admin,admin,2010-08-26 08:00,2010-09-04 16:00,64
87,89832,785,11716,841,1,0,N,N,N,CP_Drtn,TT_Task,DT_FixedDUR2,RV_OK,TK_NotStart,A1850,Rebar For basement Slab & stairs,2117,32,0,32,0,360,360,32,0,0,0,,,,2010-09-07 08:00,2010-09-12 16:00,,2010-09-02 08:00,2010-09-06 16:00,2010-09-02 08:00,2010-09-06 16:00,2010-09-02 08:00,2010-09-06 16:00,,2010-09-07 08:00,2010-09-12 16:00,,PT_Normal,,,,,+vtCuiRAvUiybHZ2aX6iag,uI52fxSih0S/NfRVjzsNXQ,,,N,0,0,,,2010-08-08 13:19,2010-08-18 04:00,admin,admin,2010-09-02 08:00,2010-09-06 16:00,32
88,89833,785,11716,841,0,0,N,N,N,CP_Drtn,TT_FinMile,DT_FixedDrtn,RV_OK,TK_NotStart,A1860,M&E conduits For Ground Floor Slab & stairs (by others),,39.9833333333333,7.98333333333333,0,0,0,0,0,0,0,0,,,,2010-09-11 16:00,2010-09-11 16:00,,2010-09-05 08:01,2010-09-05 08:01,2010-09-05 08:01,2010-09-05 08:01,2010-09-05 08:01,2010-09-05 08:01,,2010-09-11 16:00,2010-09-11 16:00,,PT_Normal,,,,,QG5JkUejxEi4PyHsHmy+eA,UaOaQpa4w0yhgeGpfzihug,,,N,0,0,,,2010-08-08 13:19,2010-08-18 21:33,admin,admin,2010-09-05 08:01,2010-09-05 08:01,0
89,89834,785,11716,841,1,0,N,N,N,CP_Drtn,TT_Task,DT_FixedDUR2,RV_OK,TK_NotStart,A1870,Pouring For basement Slab & stairs,,32,0,8,0,32,32,8,0,0,0,,,,2010-09-13 08:00,2010-09-13 16:00,,2010-09-07 08:00,2010-09-07 16:00,2010-09-07 08:00,2010-09-07 16:00,2010-09-07 08:00,2010-09-07 16:00,,2010-09-13 08:00,2010-09-13 16:00,,PT_Normal,,,,,gUmOpVGI5kePdJdq2F/Fwg,jjls4hg4A0WUYN4Sr4NyfQ,,,N,0,0,,,2010-08-08 13:19,2010-08-18 04:00,admin,admin,2010-09-07 08:00,2010-09-07 16:00,8
90,89835,785,11726,841,1,0,N,N,N,CP_Drtn,TT_Task,DT_FixedDUR2,RV_OK,TK_NotStart,A1890,Water proofing bituminous membrane,,144,0,32,0,240,240,32,0,0,0,,,,2010-09-14 08:00,2010-09-18 16:00,,2010-08-23 08:00,2010-08-26 16:00,2010-08-23 08:00,2010-08-26 16:00,2010-08-23 08:00,2010-08-26 16:00,,2010-09-14 08:00,2010-09-18 16:00,,PT_Normal,,,,,umNdF6+lOESMuEmDSw+HoA,gh9oZEFUmEGKAJswkDstcA,,,N,0,0,,,2010-08-08 13:19,2010-08-18 04:00,admin,admin,2010-08-23 08:00,2010-08-26 16:00,32
91,89836,785,11726,841,1,0,N,N,N,CP_Drtn,TT_Task,DT_FixedDUR2,RV_OK,TK_NotStart,A1900,Water proofing protection layer cartonal,2121,144,136,24,0,240,240,24,0,0,0,,,,2010-09-19 08:00,2010-09-21 16:00,,2010-08-28 08:00,2010-08-30 16:00,2010-08-28 08:00,2010-08-30 16:00,2010-08-28 08:00,2010-08-30 16:00,,2010-09-19 08:00,2010-09-21 16:00,,PT_Normal,,,,,CWgJxDEvBEq/ngXjYiDfkw,t2s639eVtUGDtSLqYBs9RA,,,N,0,0,,,2010-08-08 13:19,2010-08-18 04:00,admin,admin,2010-08-28 08:00,2010-08-30 16:00,24
92,89837,785,11720,841,1,0,N,N,N,CP_Drtn,TT_Task,DT_FixedDUR2,RV_OK,TK_NotStart,A1910,Formwork For R.C raft,,8,0,72,0,96,96,72,0,0,0,,,,2010-07-31 08:00,2010-08-09 16:00,,2010-07-29 08:00,2010-08-08 16:00,2010-07-29 08:00,2010-08-08 16:00,2010-07-29 08:00,2010-08-08 16:00,,2010-07-31 08:00,2010-08-09 16:00,,PT_Normal,,,,,5ukpHJLrzUCmkpwMR4ENsQ,pwKzQlINnUaWjak4CBmtsw,,,N,0,0,,,2010-08-08 13:19,2010-08-17 15:42,admin,admin,2010-07-29 08:00,2010-08-08 16:00,72
93,89838,785,11720,841,1,0,N,N,N,CP_Drtn,TT_Task,DT_FixedDUR2,RV_OK,TK_NotStart,A1920,Rebar For R.C raft,2117,8,0,64,0,704,704,64,0,0,0,,,,2010-08-02 08:00,2010-08-10 16:00,,2010-08-01 08:00,2010-08-09 16:00,2010-08-01 08:00,2010-08-09 16:00,2010-08-01 08:00,2010-08-09 16:00,,2010-08-02 08:00,2010-08-10 16:00,,PT_Normal,,,,,sPnNKjQaskqwnyfEQ0+cWg,VO/puxJPz0i2xsaiSFFRVQ,,,N,0,0,,,2010-08-08 13:19,2010-08-17 15:42,admin,admin,2010-08-01 08:00,2010-08-09 16:00,64
94,89839,785,11720,841,0,0,N,N,N,CP_Drtn,TT_FinMile,DT_FixedDrtn,RV_OK,TK_NotStart,A1930,M&E conduits For R.C raft (by others),,15.9833333333333,7.98333333333333,0,0,0,0,0,0,0,0,,,,2010-08-09 16:00,2010-08-09 16:00,,2010-08-08 08:01,2010-08-08 08:01,2010-08-08 08:01,2010-08-08 08:01,2010-08-08 08:01,2010-08-08 08:01,,2010-08-09 16:00,2010-08-09 16:00,,PT_Normal,,,,,Mjyg7TJyGEqnOMttlsZ00g,8KY6uzG7vEeX1E8Vf6h5Tg,,,N,0,0,,,2010-08-08 13:19,2010-08-18 21:33,admin,admin,2010-08-08 08:01,2010-08-08 08:01,0
95,89840,785,11720,841,1,0,N,N,N,CP_Drtn,TT_Task,DT_FixedDUR2,RV_OK,TK_NotStart,A1940,Pouring For R.C raft,,8,0,8,0,56,56,8,0,0,0,,,,2010-08-11 08:00,2010-08-11 16:00,,2010-08-10 08:00,2010-08-10 16:00,2010-08-10 08:00,2010-08-10 16:00,2010-08-10 08:00,2010-08-10 16:00,,2010-08-11 08:00,2010-08-11 16:00,,PT_Normal,,,,,zH+uhPm650itrFxx2Zwd5g,rLSQz9NAakuDDfeoZvrA9g,,,N,0,0,,,2010-08-08 13:19,2010-08-17 15:42,admin,admin,2010-08-10 08:00,2010-08-10 16:00,8
96,89841,785,11721,841,1,0,N,N,N,CP_Drtn,TT_Task,DT_FixedDUR2,RV_OK,TK_NotStart,A1950,Formwork For basement walls & col.,,8,0,80,0,480,480,80,0,0,0,,,,2010-08-14 08:00,2010-08-24 16:00,,2010-08-12 08:00,2010-08-23 16:00,2010-08-12 08:00,2010-08-23 16:00,2010-08-12 08:00,2010-08-23 16:00,,2010-08-14 08:00,2010-08-24 16:00,,PT_Normal,,,,,tDntYDjMdEqct1GnbDGY1g,vXjrqMAmckO62VNhJrqAhw,,,N,0,0,,,2010-08-08 13:19,2010-08-17 15:42,admin,admin,2010-08-12 08:00,2010-08-23 16:00,80
97,89842,785,11721,841,1,0,N,N,N,CP_Drtn,TT_Task,DT_FixedDUR2,RV_OK,TK_NotStart,A1960,Rebar For  basement walls & col.,2117,24,16,48,0,480,480,48,0,0,0,,,,2010-08-18 08:00,2010-08-24 16:00,,2010-08-15 08:00,2010-08-21 16:00,2010-08-15 08:00,2010-08-21 16:00,2010-08-15 08:00,2010-08-21 16:00,,2010-08-18 08:00,2010-08-24 16:00,,PT_Normal,,,,,dgVO+WKBjk+8yKmbbZ2YCQ,QSO3Cu327UilyYHOqai0Xw,,,N,0,0,,,2010-08-08 13:19,2010-08-17 15:42,admin,admin,2010-08-15 08:00,2010-08-21 16:00,48
98,89843,785,11721,841,1,0,N,N,N,CP_Drtn,TT_Task,DT_FixedDUR2,RV_OK,TK_NotStart,A1970,Pouring For  basement walls & col.,,8,0,8,0,32,32,8,0,0,0,,,,2010-08-25 08:00,2010-08-25 16:00,,2010-08-24 08:00,2010-08-24 16:00,2010-08-24 08:00,2010-08-24 16:00,2010-08-24 08:00,2010-08-24 16:00,,2010-08-25 08:00,2010-08-25 16:00,,PT_Normal,,,,,gWrSryJtU0ugNofZH0FSMg,qXvHnIFKuUqapCF5qIO3HQ,,,N,0,0,,,2010-08-08 13:19,2010-08-17 15:42,admin,admin,2010-08-24 08:00,2010-08-24 16:00,8
99,89844,785,11728,841,1,0,N,N,N,CP_Drtn,TT_Task,DT_FixedDUR2,RV_OK,TK_NotStart,A1980,Isolation For Foundation bituminous emulsion,,40,32,48,0,80,80,48,0,0,0,,,,2010-09-15 08:00,2010-09-21 16:00,,2010-09-08 08:00,2010-09-15 16:00,2010-09-08 08:00,2010-09-15 16:00,2010-09-08 08:00,2010-09-15 16:00,,2010-09-15 08:00,2010-09-21 16:00,,PT_Normal,,,,,MNt6w3pVdUSPZc9ZDdMEUA,RZzdpcM5PU+Wrt7COe37mg,,,N,0,0,,,2010-08-08 13:19,2010-08-18 04:00,admin,admin,2010-09-08 08:00,2010-09-15 16:00,48
100,89845,785,11722,841,1,0,N,N,N,CP_Drtn,TT_Task,DT_FixedDUR2,RV_OK,TK_NotStart,A1990,Formwork For basement Slab & stairs,,32,0,64,0,960,960,64,0,0,0,,,,2010-09-19 08:00,2010-09-27 16:00,,2010-09-14 08:00,2010-09-22 16:00,2010-09-14 08:00,2010-09-22 16:00,2010-09-14 08:00,2010-09-22 16:00,,2010-09-19 08:00,2010-09-27 16:00,,PT_Normal,,,,,8uyZZ2Sqo0W4A1JeBBfiEw,4BMKnlq+ZEe7UKzAbpYRvw,,,N,0,0,,,2010-08-08 13:19,2010-08-18 04:00,admin,admin,2010-09-14 08:00,2010-09-22 16:00,64
101,89846,785,11722,841,1,0,N,N,N,CP_Drtn,TT_Task,DT_FixedDUR2,RV_OK,TK_NotStart,A2000,Rebar For basement Slab & stairs,2117,32,0,40,0,360,360,40,0,0,0,,,,2010-09-28 08:00,2010-10-03 16:00,,2010-09-23 08:00,2010-09-28 16:00,2010-09-23 08:00,2010-09-28 16:00,2010-09-23 08:00,2010-09-28 16:00,,2010-09-28 08:00,2010-10-03 16:00,,PT_Normal,,,,,87BpvygcoEmo6er/e6WrIw,HFGjmfT3HUa9cwxyEs3S7w,,,N,0,0,,,2010-08-08 13:19,2010-08-18 04:00,admin,admin,2010-09-23 08:00,2010-09-28 16:00,40
102,89847,785,11722,841,0,0,N,N,N,CP_Drtn,TT_FinMile,DT_FixedDrtn,RV_OK,TK_NotStart,A2010,M&E conduits For basement Slab & stairs(by others),,47.9833333333333,15.9833333333333,0,0,0,0,0,0,0,0,,,,2010-10-03 16:00,2010-10-03 16:00,,2010-09-27 08:01,2010-09-27 08:01,2010-09-27 08:01,2010-09-27 08:01,2010-09-27 08:01,2010-09-27 08:01,,2010-10-03 16:00,2010-10-03 16:00,,PT_Normal,,,,,PEpc3eTfp0mMqmkPlb4lEg,NUnxBHbSWEKvqBp3IhSwsw,,,N,0,0,,,2010-08-08 13:19,2010-08-18 21:33,admin,admin,2010-09-27 08:01,2010-09-27 08:01,0
103,89848,785,11722,841,1,0,N,N,N,CP_Drtn,TT_Task,DT_FixedDUR2,RV_OK,TK_NotStart,A2020,Pouring For basement Slab & stairs,,32,24,8,0,32,32,8,0,0,0,,,,2010-10-05 08:00,2010-10-05 16:00,,2010-09-30 08:00,2010-09-30 16:00,2010-09-30 08:00,2010-09-30 16:00,2010-09-30 08:00,2010-09-30 16:00,,2010-10-05 08:00,2010-10-05 16:00,,PT_Normal,,,,,XqEd2//wnkeJNidkJQzoYg,dgIfIWTUBUaGt4CMZI6uDw,,,N,0,0,,,2010-08-08 13:19,2010-08-18 04:00,admin,admin,2010-09-30 08:00,2010-09-30 16:00,8
104,89849,785,11728,841,1,0,N,N,N,CP_Drtn,TT_Task,DT_FixedDUR2,RV_OK,TK_NotStart,A2040,Water proofing bituminous membrane,,8,0,48,0,240,240,48,0,0,0,,,,2010-09-07 08:00,2010-09-14 16:00,,2010-09-06 08:00,2010-09-13 16:00,2010-09-06 08:00,2010-09-13 16:00,2010-09-06 08:00,2010-09-13 16:00,,2010-09-07 08:00,2010-09-14 16:00,,PT_Normal,,,,,7seB8pU4Xkag3XRptffsGg,6TSvgtzD4UqX5OboXK3X+g,,,N,0,0,,,2010-08-08 13:19,2010-08-18 04:00,admin,admin,2010-09-06 08:00,2010-09-13 16:00,48
105,89850,785,11728,841,1,0,N,N,N,CP_Drtn,TT_Task,DT_FixedDUR2,RV_OK,TK_NotStart,A2050,Water proofing protection layer cartonal,2121,8,0,48,0,240,240,48,0,0,0,,,,2010-09-15 08:00,2010-09-21 16:00,,2010-09-14 08:00,2010-09-20 16:00,2010-09-14 08:00,2010-09-20 16:00,2010-09-14 08:00,2010-09-20 16:00,,2010-09-15 08:00,2010-09-21 16:00,,PT_Normal,,,,,XoD3bg/U7U2SRGpCKV62Qg,ON0kmrh7J0mMKRJOskdHVw,,,N,0,0,,,2010-08-08 13:19,2010-08-18 04:00,admin,admin,2010-09-14 08:00,2010-09-20 16:00,48
106,89851,785,11684,841,1,0,N,N,N,CP_Drtn,TT_Task,DT_FixedDUR2,RV_OK,TK_NotStart,A2060,Formworks for R.C raft,,32,0,16,0,80,80,16,0,0,0,,,,2010-07-26 08:00,2010-07-27 16:00,,2010-07-21 08:00,2010-07-22 16:00,2010-07-21 08:00,2010-07-22 16:00,2010-07-21 08:00,2010-07-22 16:00,,2010-07-26 08:00,2010-07-27 16:00,,PT_Normal,,,,,pnOguMyDDk2nF8PaELY23w,,,,N,0,0,,,2010-08-08 13:19,2010-08-18 21:34,admin,admin,2010-07-21 08:00,2010-07-22 16:00,16
107,89852,785,11684,841,1,0,N,N,N,CP_Drtn,TT_Task,DT_FixedDUR2,RV_OK,TK_NotStart,A2070,Rebar for R.C raft,2117,32,0,24,0,120,120,24,0,0,0,,,,2010-07-28 08:00,2010-07-31 16:00,,2010-07-24 08:00,2010-07-26 16:00,2010-07-24 08:00,2010-07-26 16:00,2010-07-24 08:00,2010-07-26 16:00,,2010-07-28 08:00,2010-07-31 16:00,,PT_Normal,,,,,mQhVW+JdFkO8fzilgRqLeg,,,,N,0,0,,,2010-08-08 13:19,2010-08-18 21:34,admin,admin,2010-07-24 08:00,2010-07-26 16:00,24
108,89853,785,11684,841,1,0,N,N,N,CP_Drtn,TT_Task,DT_FixedDUR2,RV_OK,TK_NotStart,A2080,Pouring For R.C raft,,32,0,8,0,40,40,8,0,0,0,,,,2010-08-01 08:00,2010-08-01 16:00,,2010-07-27 08:00,2010-07-27 16:00,2010-07-27 08:00,2010-07-27 16:00,2010-07-27 08:00,2010-07-27 16:00,,2010-08-01 08:00,2010-08-01 16:00,,PT_Normal,,,,,ViF/D/2Te0C87/HxOi1vNQ,,,,N,0,0,,,2010-08-08 13:19,2010-08-18 21:34,admin,admin,2010-07-27 08:00,2010-07-27 16:00,8
109,89854,785,11684,841,1,0,N,N,N,CP_Drtn,TT_Task,DT_FixedDUR2,RV_OK,TK_NotStart,A2090,Formwork For Tank walls,,32,0,64,0,240,240,64,0,0,0,,,,2010-08-02 08:00,2010-08-10 16:00,,2010-07-28 08:00,2010-08-05 16:00,2010-07-28 08:00,2010-08-05 16:00,2010-07-28 08:00,2010-08-05 16:00,,2010-08-02 08:00,2010-08-10 16:00,,PT_Normal,,,,,w9rTmDBzzEuCb3RHffUZBw,,,,N,0,0,,,2010-08-08 13:19,2010-08-18 21:34,admin,admin,2010-07-28 08:00,2010-08-05 16:00,64
110,89855,785,11684,841,1,0,N,N,N,CP_Drtn,TT_Task,DT_FixedDUR2,RV_OK,TK_NotStart,A2100,Rebar For Tank walls,2117,32,0,48,0,120,120,48,0,0,0,,,,2010-08-11 08:00,2010-08-17 16:00,,2010-08-07 08:00,2010-08-12 16:00,2010-08-07 08:00,2010-08-12 16:00,2010-08-07 08:00,2010-08-12 16:00,,2010-08-11 08:00,2010-08-17 16:00,,PT_Normal,,,,,Pr0wY0GMhk2B8ij36bpbUA,,,,N,0,0,,,2010-08-08 13:19,2010-08-18 21:34,admin,admin,2010-08-07 08:00,2010-08-12 16:00,48
111,89856,785,11684,841,1,0,N,N,N,CP_Drtn,TT_Task,DT_FixedDUR2,RV_OK,TK_NotStart,A2110,Pouring For Tank walls,,32,0,8,0,40,40,8,0,0,0,,,,2010-08-18 08:00,2010-08-18 16:00,,2010-08-14 08:00,2010-08-14 16:00,2010-08-14 08:00,2010-08-14 16:00,2010-08-14 08:00,2010-08-14 16:00,,2010-08-18 08:00,2010-08-18 16:00,,PT_Normal,,,,,EUzHeFdDakCsfIqF9aLFcg,,,,N,0,0,,,2010-08-08 13:19,2010-08-18 21:34,admin,admin,2010-08-14 08:00,2010-08-14 16:00,8
112,89857,785,11684,841,1,0,N,N,N,CP_Drtn,TT_Task,DT_FixedDUR2,RV_OK,TK_NotStart,A2120,Formwork For Tank Slab,,32,0,80,0,120,120,80,0,0,0,,,,2010-08-19 08:00,2010-08-30 16:00,,2010-08-15 08:00,2010-08-25 16:00,2010-08-15 08:00,2010-08-25 16:00,2010-08-15 08:00,2010-08-25 16:00,,2010-08-19 08:00,2010-08-30 16:00,,PT_Normal,,,,,vPIOKyOHoEaT9tUBYVlBKg,,,,N,0,0,,,2010-08-08 13:19,2010-08-18 21:34,admin,admin,2010-08-15 08:00,2010-08-25 16:00,80
113,89858,785,11684,841,1,0,N,N,N,CP_Drtn,TT_Task,DT_FixedDUR2,RV_OK,TK_NotStart,A2130,Rebar For Tank Slab,2117,32,0,48,0,160,160,48,0,0,0,,,,2010-08-31 08:00,2010-09-06 16:00,,2010-08-26 08:00,2010-09-01 16:00,2010-08-26 08:00,2010-09-01 16:00,2010-08-26 08:00,2010-09-01 16:00,,2010-08-31 08:00,2010-09-06 16:00,,PT_Normal,,,,,+1CBfVnp/0yAKYk5dT8FBA,,,,N,0,0,,,2010-08-08 13:19,2010-08-18 21:34,admin,admin,2010-08-26 08:00,2010-09-01 16:00,48
114,89859,785,11684,841,1,0,N,N,N,CP_Drtn,TT_Task,DT_FixedDUR2,RV_OK,TK_NotStart,A2140,Pouring  For Tank slab,,32,0,8,0,40,40,8,0,0,0,,,,2010-09-07 08:00,2010-09-07 16:00,,2010-09-02 08:00,2010-09-02 16:00,2010-09-02 08:00,2010-09-02 16:00,2010-09-02 08:00,2010-09-02 16:00,,2010-09-07 08:00,2010-09-07 16:00,,PT_Normal,,,,,UFIDvtysFEq4GfZY58eUQw,,,,N,0,0,,,2010-08-08 13:19,2010-08-18 21:34,admin,admin,2010-09-02 08:00,2010-09-02 16:00,8
115,89860,785,11684,841,1,0,N,N,N,CP_Drtn,TT_Task,DT_FixedDUR2,RV_OK,TK_NotStart,A2150,Internal insulation,,32,0,120,0,0,0,120,0,0,0,,,,2010-09-08 08:00,2010-09-26 16:00,,2010-09-04 08:00,2010-09-21 16:00,2010-09-04 08:00,2010-09-21 16:00,2010-09-04 08:00,2010-09-21 16:00,,2010-09-08 08:00,2010-09-26 16:00,,PT_Normal,,,,,5TnvLExvRki/y1SB6PkJxw,,,,N,0,0,,,2010-08-08 13:19,2010-08-18 21:34,admin,admin,2010-09-04 08:00,2010-09-21 16:00,120
116,89861,785,11684,841,1,0,N,N,N,CP_Drtn,TT_Task,DT_FixedDUR2,RV_OK,TK_NotStart,A2160,External insulation,,32,32,80,0,0,0,80,0,0,0,,,,2010-09-27 08:00,2010-10-07 16:00,,2010-09-22 08:00,2010-10-03 16:00,2010-09-22 08:00,2010-10-03 16:00,2010-09-22 08:00,2010-10-03 16:00,,2010-09-27 08:00,2010-10-07 16:00,,PT_Normal,,,,,9nR9Kailo0uHp9ftbFImBw,,,,N,0,0,,,2010-08-08 13:19,2010-08-18 21:34,admin,admin,2010-09-22 08:00,2010-10-03 16:00,80
117,89862,785,11694,841,0,0,N,N,N,CP_Drtn,TT_FinMile,DT_FixedDrtn,RV_OK,TK_NotStart,A1201,Approval of All R.C raft dimension,,32,8,0,0,0,0,0,0,0,0,,,,2010-07-19 16:00,2010-07-19 16:00,,2010-07-14 16:00,2010-07-14 16:00,2010-07-14 16:00,2010-07-14 16:00,2010-07-14 16:00,2010-07-14 16:00,,2010-07-19 16:00,2010-07-19 16:00,,PT_Normal,,,,,Cca4RefOXUu9pe+xeCEzGg,TQUwoveBKEO+M4EHNTWADA,,,N,0,0,,,2010-08-08 13:19,2010-08-17 15:42,admin,admin,2010-07-14 16:00,2010-07-14 16:00,0
118,89863,785,11694,841,0,0,N,N,N,CP_Drtn,TT_FinMile,DT_FixedDrtn,RV_OK,TK_NotStart,A1211,Approval of All column layout,,32,8,0,0,0,0,0,0,0,0,,,,2010-07-19 16:00,2010-07-19 16:00,,2010-07-14 16:00,2010-07-14 16:00,2010-07-14 16:00,2010-07-14 16:00,2010-07-14 16:00,2010-07-14 16:00,,2010-07-19 16:00,2010-07-19 16:00,,PT_Normal,,,,,9o+cVLQu7EiBuO47+/s2ww,ZHXePO0d70+Nlw1C97nwNQ,,,N,0,0,,,2010-08-08 13:19,2010-08-17 15:42,admin,admin,2010-07-14 16:00,2010-07-14 16:00,0
119,89864,785,11694,841,0,0,N,N,N,CP_Drtn,TT_FinMile,DT_FixedDrtn,RV_OK,TK_NotStart,A1221,Approval of All R.C raft RFT&starters,,48,0,0,0,0,0,0,0,0,0,,,,2010-08-01 16:00,2010-08-01 16:00,,2010-07-25 16:00,2010-07-25 16:00,2010-07-25 16:00,2010-07-25 16:00,2010-07-25 16:00,2010-07-25 16:00,,2010-08-01 16:00,2010-08-01 16:00,,PT_Normal,,,,,U3NlQKpgVEqohT29oSV0RQ,hEK1OTMaS023lip5X1r4aw,,,N,0,0,,,2010-08-08 13:19,2010-08-17 15:42,admin,admin,2010-07-25 16:00,2010-07-25 16:00,0
120,89865,785,11694,841,0,0,N,N,N,CP_Drtn,TT_FinMile,DT_FixedDrtn,RV_OK,TK_NotStart,A1231,Approval of All basement columns & walls RFT,,0,0,0,0,0,0,0,0,0,0,,,,2010-07-31 16:00,2010-07-31 16:00,,2010-07-31 16:00,2010-07-31 16:00,2010-07-31 16:00,2010-07-31 16:00,2010-07-31 16:00,2010-07-31 16:00,,2010-07-31 16:00,2010-07-31 16:00,,PT_Normal,,,,,jyslWXZhbkGdLfgNjwoq2g,FncT+B/w9ku+6p55HRGrYg,,,Y,0,0,,,2010-08-08 13:19,2010-08-18 21:34,admin,admin,2010-07-31 16:00,2010-07-31 16:00,0
121,89866,785,11694,841,0,0,N,N,N,CP_Drtn,TT_FinMile,DT_FixedDrtn,RV_OK,TK_NotStart,A1241,Approval of All basement slab concrete dimension,,136,120,0,0,0,0,0,0,0,0,,,,2010-08-28 16:00,2010-08-28 16:00,,2010-08-08 16:00,2010-08-08 16:00,2010-08-08 16:00,2010-08-08 16:00,2010-08-08 16:00,2010-08-08 16:00,,2010-08-28 16:00,2010-08-28 16:00,,PT_Normal,,,,,oyhwz/2m0U6lw73HxpqWMQ,hfb3em5cr0aQv21tG6zahA,,,N,0,0,,,2010-08-08 13:19,2010-08-17 15:42,admin,admin,2010-08-08 16:00,2010-08-08 16:00,0
122,89867,785,11694,841,0,0,N,N,N,CP_Drtn,TT_FinMile,DT_FixedDrtn,RV_OK,TK_NotStart,A1251,Approval of All basement slab RFT,,128,96,0,0,0,0,0,0,0,0,,,,2010-09-06 16:00,2010-09-06 16:00,,2010-08-18 16:00,2010-08-18 16:00,2010-08-18 16:00,2010-08-18 16:00,2010-08-18 16:00,2010-08-18 16:00,,2010-09-06 16:00,2010-09-06 16:00,,PT_Normal,,,,,b8oRTkOiZEKtYrfCtCIVEQ,UjuoEPoriEmi2KpzXdDJUQ,,,N,0,0,,,2010-08-08 13:19,2010-08-17 15:42,admin,admin,2010-08-18 16:00,2010-08-18 16:00,0
123,89868,785,11685,841,0,0,N,N,N,CP_Drtn,TT_FinMile,DT_FixedDrtn,RV_OK,TK_NotStart,A2170,Approval of all tank's shop drawings,,32,0,0,0,0,0,0,0,0,0,,,,2010-07-17 16:00,2010-07-17 16:00,,2010-07-12 16:00,2010-07-12 16:00,2010-07-12 16:00,2010-07-12 16:00,2010-07-12 16:00,2010-07-12 16:00,,2010-07-17 16:00,2010-07-17 16:00,,PT_Normal,,,,,k3UhFkVIakujQOh9b85H2Q,,,,N,0,0,,,2010-08-08 13:19,2010-08-18 21:34,admin,admin,2010-07-12 16:00,2010-07-12 16:00,0
124,89869,785,11684,841,0,0,N,N,N,CP_Drtn,TT_FinMile,DT_FixedDrtn,RV_OK,TK_NotStart,A2079,M&E conduits For R.C raft (by others),,39.9833333333333,7.98333333333333,0,0,0,0,0,0,0,0,,,,2010-07-29 16:00,2010-07-29 16:00,,2010-07-25 08:01,2010-07-25 08:01,2010-07-25 08:01,2010-07-25 08:01,2010-07-25 08:01,2010-07-25 08:01,,2010-07-29 16:00,2010-07-29 16:00,,PT_Normal,,,,,W6i3fRu77Em7DrTlFBEEgA,,,,N,0,0,,,2010-08-08 13:19,2010-08-18 21:34,admin,admin,2010-07-25 08:01,2010-07-25 08:01,0
125,89870,785,11684,841,0,0,N,N,N,CP_Drtn,TT_FinMile,DT_FixedDrtn,RV_OK,TK_NotStart,A2119,M&E conduits For tank's slab (by others),,39.9833333333333,7.98333333333333,0,0,0,0,0,0,0,0,,,,2010-09-05 16:00,2010-09-05 16:00,,2010-08-31 08:01,2010-08-31 08:01,2010-08-31 08:01,2010-08-31 08:01,2010-08-31 08:01,2010-08-31 08:01,,2010-09-05 16:00,2010-09-05 16:00,,PT_Normal,,,,,LbkrTIREIECU3xG8BeBMfw,,,,N,0,0,,,2010-08-08 13:19,2010-08-18 21:34,admin,admin,2010-08-31 08:01,2010-08-31 08:01,0
126,89871,785,11684,841,0,0,N,N,N,CP_Drtn,TT_FinMile,DT_FixedDrtn,RV_OK,TK_NotStart,A2109,M&E conduits For R.C walls (by others),,39.9833333333333,7.98333333333333,0,0,0,0,0,0,0,0,,,,2010-08-16 16:00,2010-08-16 16:00,,2010-08-11 08:01,2010-08-11 08:01,2010-08-11 08:01,2010-08-11 08:01,2010-08-11 08:01,2010-08-11 08:01,,2010-08-16 16:00,2010-08-16 16:00,,PT_Normal,,,,,4ULJ8EJs3EGc7DpQFd3YoA,,,,N,0,0,,,2010-08-08 13:19,2010-08-18 21:34,admin,admin,2010-08-11 08:01,2010-08-11 08:01,0
127,89872,785,11701,841,1,0,N,N,N,CP_Drtn,TT_Task,DT_FixedDUR2,RV_OK,TK_NotStart,A2370,Backfilling Around Foundation,,128,128,88,0,0,0,88,0,0,0,,,,2010-09-23 08:00,2010-10-05 16:00,,2010-09-04 08:00,2010-09-16 16:00,2010-09-04 08:00,2010-09-16 16:00,2010-09-04 08:00,2010-09-16 16:00,,2010-09-23 08:00,2010-10-05 16:00,,PT_Normal,,,,,5FhTQ6YmPkeDaEJKrEEM/Q,,,,N,0,0,,,2010-08-08 13:19,2010-08-18 04:00,admin,admin,2010-09-04 08:00,2010-09-16 16:00,88
128,89873,785,11703,841,1,0,N,N,N,CP_Drtn,TT_Task,DT_FixedDUR2,RV_OK,TK_NotStart,A2380,Backfilling Around Foundation,,8,0,96,0,0,0,96,0,0,0,,,,2010-09-22 08:00,2010-10-05 16:00,,2010-09-21 08:00,2010-10-04 16:00,2010-09-21 08:00,2010-10-04 16:00,2010-09-21 08:00,2010-10-04 16:00,,2010-09-22 08:00,2010-10-05 16:00,,PT_Normal,,,,,xT3kaZfLV0K+686S3AfEOA,,,,N,0,0,,,2010-08-08 13:19,2010-08-18 04:00,admin,admin,2010-09-21 08:00,2010-10-04 16:00,96
129,89874,785,11702,841,1,0,N,N,N,CP_Drtn,TT_Task,DT_FixedDUR2,RV_OK,TK_NotStart,A2390,Testing & Handingover,,0,0,16,0,0,0,16,0,0,0,,,,2010-10-06 08:00,2010-10-07 16:00,,2010-10-06 08:00,2010-10-07 16:00,2010-10-06 08:00,2010-10-07 16:00,2010-10-06 08:00,2010-10-07 16:00,,2010-10-06 08:00,2010-10-07 16:00,,PT_Normal,,,,,olyUCF6EtUa5bv/aFDrqQg,,,,Y,0,0,,,2010-08-08 13:19,2010-08-18 21:34,admin,admin,2010-10-06 08:00,2010-10-07 16:00,16
130,89875,785,11704,841,1,0,N,N,N,CP_Drtn,TT_Task,DT_FixedDUR2,RV_OK,TK_NotStart,A2400,Testing & Handingover,,8,8,16,0,0,0,16,0,0,0,,,,2010-10-06 08:00,2010-10-07 16:00,,2010-10-05 08:00,2010-10-06 16:00,2010-10-05 08:00,2010-10-06 16:00,2010-10-05 08:00,2010-10-06 16:00,,2010-10-06 08:00,2010-10-07 16:00,,PT_Normal,,,,,dW0+LwDWN0OElApOp6gVBA,,,,N,0,0,,,2010-08-08 13:19,2010-08-18 04:00,admin,admin,2010-10-05 08:00,2010-10-06 16:00,16
131,89876,785,11719,841,1,0,N,N,N,CP_Drtn,TT_Task,DT_FixedDUR2,RV_OK,TK_NotStart,A1690,Formwork For basement Slab & stairs,,0,0,80,0,2880,2880,80,0,0,0,,,,2010-08-29 08:00,2010-09-08 16:00,,2010-08-29 08:00,2010-09-08 16:00,2010-08-29 08:00,2010-09-08 16:00,2010-08-29 08:00,2010-09-08 16:00,,2010-08-29 08:00,2010-09-08 16:00,,PT_Normal,,,,,qDlmAVvvmEKXn6pICjq3hg,9f1vwk6UHk6Vi+TyTUGTGw,,,Y,0,0,,,2010-08-08 13:19,2010-08-18 21:34,admin,admin,2010-08-29 08:00,2010-09-08 16:00,80
