,task_id,proj_id,wbs_id,clndr_id,est_wt,phys_complete_pct,rev_fdbk_flag,lock_plan_flag,auto_compute_act_flag,complete_pct_type,task_type,duration_type,review_type,status_code,task_code,task_name,rsrc_id,total_float_hr_cnt,free_float_hr_cnt,remain_drtn_hr_cnt,act_work_qty,remain_work_qty,target_work_qty,target_drtn_hr_cnt,target_equip_qty,act_equip_qty,remain_equip_qty,cstr_date,act_start_date,act_end_date,late_start_date,late_end_date,expect_end_date,early_start_date,early_end_date,restart_date,reend_date,target_start_date,target_end_date,review_end_date,rem_late_start_date,rem_late_end_date,cstr_type,priority_type,suspend_date,resume_date,float_path,float_path_order,guid,tmpl_guid,cstr_date2,cstr_type2,driving_path_flag,act_this_per_work_qty,act_this_per_equip_qty,external_early_start_date,external_late_end_date,create_date,update_date,create_user,update_user
0,85085,1346,11490,1473,0,100,N,N,N,CP_Phys,TT_Mile,DT_FixedDrtn,RV_OK,TK_Complete,A1,Contract Award Date,,,,0,0,0,0,0,0,0,0,,2012-12-17 07:00,2012-12-17 07:00,2013-04-23 16:00,2013-04-23 16:00,,2013-04-23 00:00,2013-04-23 00:00,,,2012-12-17 07:00,2012-12-17 07:00,,,,,PT_Normal,,,,,Pwli97SyUkytgqAi7FHegQ,,,,N,0,0,,,2013-06-23 13:00,2013-06-23 13:00,admin,admin
1,85086,1346,11490,1473,1,40,N,N,N,CP_Phys,TT_Task,DT_FixedDrtn,RV_OK,TK_Active,A4,Preliminaries,2972,9,9,1870,0,28050,28050,1870,0,0,0,,2013-01-16 16:00,,2013-04-23 16:00,2014-01-15 16:00,,2013-04-23 07:00,2014-01-14 17:00,2013-04-23 07:00,2014-01-14 17:00,2013-04-23 07:00,2014-01-14 17:00,,2013-04-23 16:00,2014-01-15 16:00,,PT_Normal,,,,,jMxbPzBvbkeCUCPvH4C/GA,,,,N,0,0,,,2013-06-23 13:00,2013-06-23 13:00,admin,admin
2,85087,1346,11490,1473,1,100,N,N,N,CP_Phys,TT_Task,DT_FixedDrtn,RV_OK,TK_Complete,A2,Contract Commencement Date,,,,0,0,0,0,9,0,0,0,,2012-12-17 07:00,2012-12-17 16:00,2013-04-23 16:00,2013-04-23 16:00,,2013-04-23 00:00,2013-04-23 00:00,,,2012-12-17 07:00,2012-12-17 16:00,,,,,PT_Normal,,,,,APkEPB2iKk6Soscja7L0uQ,,,,N,0,0,,,2013-06-23 13:00,2013-06-23 13:00,admin,admin
3,85088,1346,11490,1473,1,100,N,N,N,CP_Phys,TT_Task,DT_FixedDrtn,RV_OK,TK_Complete,A3,Mobilization,,,,0,0,0,0,220,0,0,0,,2012-12-17 16:00,2013-01-16 16:00,2013-04-23 16:00,2013-04-23 16:00,,2013-04-23 00:00,2013-04-23 00:00,,,2012-12-17 16:00,2013-01-16 16:00,,,,,PT_Normal,,,,,Nu9zB5/u7US8D8b2ZMe8Zw,,,,N,0,0,,,2013-06-23 13:00,2013-06-23 13:00,admin,admin
4,85089,1346,11490,1473,0,0,N,N,N,CP_Phys,TT_FinMile,DT_FixedDrtn,RV_OK,TK_NotStart,A15091,Contract Completion Date,,0,0,0,0,0,0,0,0,0,0,,,,2014-01-15 16:00,2014-01-15 16:00,,2014-01-15 16:00,2014-01-15 16:00,2014-01-15 16:00,2014-01-15 16:00,2014-01-15 16:00,2014-01-15 16:00,,2014-01-15 16:00,2014-01-15 16:00,,PT_Normal,,,,,qaERmQpw50mNB2aOF3ctYw,JKCgw8FuQ7SmdhHy6tQUjw,,,Y,0,0,,,2013-06-23 13:00,2013-06-23 13:00,admin,admin
5,85090,1346,11491,1473,1,0,N,N,N,CP_Phys,TT_Task,DT_FixedDrtn,RV_OK,TK_NotStart,A9010,"Final Inspections, Measurements, As Built Drawings, Handing Over.",,0,0,1350,0,0,0,1350,0,0,0,,,,2013-07-06 16:00,2014-01-15 16:00,,2013-07-06 16:00,2014-01-15 16:00,2013-07-06 16:00,2014-01-15 16:00,2013-07-06 16:00,2014-01-15 16:00,,2013-07-06 16:00,2014-01-15 16:00,,PT_Normal,,,,,JNMZHa0p2EG5K8Y0GlXMkw,,,,Y,0,0,,,2013-06-23 13:00,2013-06-23 13:00,admin,admin
6,85091,1346,11535,1473,1,0,N,N,N,CP_Phys,TT_Task,DT_FixedDrtn,RV_OK,TK_NotStart,A14610,Erection of Scaffolding for Abutment - Lift 1,3002,142,0,27,0,579,579,27,30,0,30,,,,2013-06-15 08:00,2013-06-17 15:00,,2013-05-25 16:00,2013-05-28 13:00,2013-05-25 16:00,2013-05-28 13:00,2013-05-25 16:00,2013-05-28 13:00,,2013-06-15 08:00,2013-06-17 15:00,,PT_Normal,,,,,Bis+zndSXEafqM06R0swhw,UquOGlbUSGyL/kxeDt5nng,,,N,0,0,,,2013-06-23 13:00,2013-06-23 13:00,admin,admin
7,85092,1346,11535,1473,1,0,N,N,N,CP_Phys,TT_Task,DT_FixedDrtn,RV_OK,TK_NotStart,A14620,Reinforcement Fixing for Abutment - Lift 1,2971,142,0,45,0,500,500,45,50,0,50,,,,2013-06-17 15:00,2013-06-24 10:00,,2013-05-28 13:00,2013-06-04 08:00,2013-05-28 13:00,2013-06-04 08:00,2013-05-28 13:00,2013-06-04 08:00,,2013-06-17 15:00,2013-06-24 10:00,,PT_Normal,,,,,J9oocFrwkUKkgXSXnbRFxA,JgwlFWRTQOqpju89WkLdjA,,,N,0,0,,,2013-06-23 13:00,2013-06-23 13:00,admin,admin
8,85093,1346,11535,1473,1,0,N,N,N,CP_Phys,TT_Task,DT_FixedDrtn,RV_OK,TK_NotStart,A14630,Formwork for Abutment - Lift 1,2980,142,0,27,0,357,357,27,30,0,30,,,,2013-06-24 10:00,2013-06-26 17:00,,2013-06-04 08:00,2013-06-08 15:00,2013-06-04 08:00,2013-06-08 15:00,2013-06-04 08:00,2013-06-08 15:00,,2013-06-24 10:00,2013-06-26 17:00,,PT_Normal,,,,,XZtGwj8OfEq18afibVCW4A,6v6gX38vStu8zwOoHZhXgg,,,N,0,0,,,2013-06-23 13:00,2013-06-23 13:00,admin,admin
9,85094,1346,11535,1473,1,0,N,N,N,CP_Phys,TT_Task,DT_FixedDrtn,RV_OK,TK_NotStart,A14640,Concreting for Abutment - Lift 1,2969,142,0,8,0,138,138,8,62,0,62,,,,2013-06-29 07:00,2013-06-29 15:00,,2013-06-08 15:00,2013-06-09 13:00,2013-06-08 15:00,2013-06-09 13:00,2013-06-08 15:00,2013-06-09 13:00,,2013-06-29 07:00,2013-06-29 15:00,,PT_Normal,,,,,g/X6M7+JCkKrck+gtY8dGQ,iFM/2GuOQUOho0FFlIVyHg,,,N,0,0,,,2013-06-23 13:00,2013-06-23 13:00,admin,admin
10,85095,1346,11535,1473,1,0,N,N,N,CP_Phys,TT_Task,DT_FixedDrtn,RV_OK,TK_NotStart,A14650,Removal of Formwork for Abutment - Lift 1,2980,142,0,20,0,120,120,20,20,0,20,,,,2013-06-30 13:00,2013-07-02 13:00,,2013-06-10 11:00,2013-06-12 11:00,2013-06-10 11:00,2013-06-12 11:00,2013-06-10 11:00,2013-06-12 11:00,,2013-06-30 13:00,2013-07-02 13:00,,PT_Normal,,,,,3IzrsMtj7Eaix28wLc224w,fwBmBHs3SUuUWVqyCcM+Aw,,,N,0,0,,,2013-06-23 13:00,2013-06-23 13:00,admin,admin
11,85096,1346,11535,1473,1,0,N,N,N,CP_Phys,TT_Task,DT_FixedDrtn,RV_OK,TK_NotStart,A14660,Erection of Scaffolding for Abutment  - Lift 2,3002,142,0,18,0,274,274,18,16,0,16,,,,2013-07-02 13:00,2013-07-06 11:00,,2013-06-12 11:00,2013-06-16 09:00,2013-06-12 11:00,2013-06-16 09:00,2013-06-12 11:00,2013-06-16 09:00,,2013-07-02 13:00,2013-07-06 11:00,,PT_Normal,,,,,jJvRhGL1zkaMPRhjF/dDHQ,rcgJzl7dTJ+RP/YbbZoiWQ,,,N,0,0,,,2013-06-23 13:00,2013-06-23 13:00,admin,admin
12,85097,1346,11535,1473,1,0,N,N,N,CP_Phys,TT_Task,DT_FixedDrtn,RV_OK,TK_NotStart,A14670,Reinforcement Fixing for Abutment - Lift 2,2971,142,0,18,0,196,196,18,18,0,18,,,,2013-07-06 11:00,2013-07-08 09:00,,2013-06-16 09:00,2013-06-17 17:00,2013-06-16 09:00,2013-06-17 17:00,2013-06-16 09:00,2013-06-17 17:00,,2013-07-06 11:00,2013-07-08 09:00,,PT_Normal,,,,,HbfpwjsObUeLHoG7Ff3MZQ,Ai7Ttu2MQo+Br9j1/WGq+Q,,,N,0,0,,,2013-06-23 13:00,2013-06-23 13:00,admin,admin
13,85098,1346,11535,1473,1,0,N,N,N,CP_Phys,TT_Task,DT_FixedDrtn,RV_OK,TK_NotStart,A14680,Formwork for Abutment - Lift 2,2980,142,0,18,0,236,236,18,18,0,18,,,,2013-07-08 09:00,2013-07-09 17:00,,2013-06-18 07:00,2013-06-19 15:00,2013-06-18 07:00,2013-06-19 15:00,2013-06-18 07:00,2013-06-19 15:00,,2013-07-08 09:00,2013-07-09 17:00,,PT_Normal,,,,,ZjcTbfIIiEKuP4HOdf9Y1g,UkNqovvMS7mu605SFwvykw,,,N,0,0,,,2013-06-23 13:00,2013-06-23 13:00,admin,admin
14,85099,1346,11535,1473,1,0,N,N,N,CP_Phys,TT_Task,DT_FixedDrtn,RV_OK,TK_NotStart,A14690,Concreting for Abutment - Lift 2,2969,142,0,8,0,138,138,8,62,0,62,,,,2013-07-10 07:00,2013-07-10 15:00,,2013-06-19 15:00,2013-06-22 13:00,2013-06-19 15:00,2013-06-22 13:00,2013-06-19 15:00,2013-06-22 13:00,,2013-07-10 07:00,2013-07-10 15:00,,PT_Normal,,,,,XrKMO0a920qzMstskUMWEA,Dqtb4zCTRI+EPFQjsGPH4Q,,,N,0,0,,,2013-06-23 13:00,2013-06-23 13:00,admin,admin
15,85100,1346,11535,1473,1,0,N,N,N,CP_Phys,TT_Task,DT_FixedDrtn,RV_OK,TK_NotStart,A14700,Removal of Formwork for Abutment - Lift 2,2980,142,0,22,0,132,132,22,22,0,22,,,,2013-07-13 13:00,2013-07-15 15:00,,2013-06-23 11:00,2013-06-25 13:00,2013-06-23 11:00,2013-06-25 13:00,2013-06-23 11:00,2013-06-25 13:00,,2013-07-13 13:00,2013-07-15 15:00,,PT_Normal,,,,,mBc7WST/b0yPtHHVgqLaVw,t7qsaU/yTfO2ovKnM3JYXA,,,N,0,0,,,2013-06-23 13:00,2013-06-23 13:00,admin,admin
16,85101,1346,11535,1473,1,0,N,N,N,CP_Phys,TT_Task,DT_FixedDrtn,RV_OK,TK_NotStart,A14710,Removal of Formwork for Abutment - Breast Wall,2980,142,0,18,0,98,98,18,0,0,0,,,,2013-07-20 10:00,2013-07-22 08:00,,2013-06-30 08:00,2013-07-01 16:00,2013-06-30 08:00,2013-07-01 16:00,2013-06-30 08:00,2013-07-01 16:00,,2013-07-20 10:00,2013-07-22 08:00,,PT_Normal,,,,,H9H6y50gMUuo+vlvBgt9fw,1qgJ9hq/QzC2LDVmwP9Yfw,,,N,0,0,,,2013-06-23 13:00,2013-06-23 13:00,admin,admin
17,85102,1346,11535,1473,1,0,N,N,N,CP_Phys,TT_Task,DT_FixedDrtn,RV_OK,TK_NotStart,A14720,Reinforcement Cutting & Bending for Abutment - Lift 1,2970,288,0,50,0,1170,1170,50,100,0,100,,,,2013-06-12 15:00,2013-06-19 15:00,,2013-05-05 07:00,2013-05-11 17:00,2013-05-05 07:00,2013-05-11 17:00,2013-05-05 07:00,2013-05-11 17:00,,2013-06-12 15:00,2013-06-19 15:00,,PT_Normal,,,,,M6fR7xehekGyU2mqiEhYOA,VTytmEtyQI+asPbnsoB0/g,,,N,0,0,,,2013-06-23 13:00,2013-06-23 13:00,admin,admin
18,85103,1346,11535,1473,1,0,N,N,N,CP_Phys,TT_Task,DT_FixedDrtn,RV_OK,TK_NotStart,A14730,Reinforcement Cutting & Bending for Abutment - Lift 2,2970,364,0,50,0,450,450,50,100,0,100,,,,2013-06-29 11:00,2013-07-06 11:00,,2013-05-08 07:00,2013-05-14 17:00,2013-05-08 07:00,2013-05-14 17:00,2013-05-08 07:00,2013-05-14 17:00,,2013-06-29 11:00,2013-07-06 11:00,,PT_Normal,,,,,aO+cvjHoLUasKO0afOipaA,m90MZ57SR3W7rH767+kMxg,,,N,0,0,,,2013-06-23 13:00,2013-06-23 13:00,admin,admin
19,85104,1346,11535,1473,1,0,N,N,N,CP_Phys,TT_Task,DT_FixedDrtn,RV_OK,TK_NotStart,A14740,Erection of Scaffolding for Abutment - Breast Walls,2971,142,0,7,0,54,54,7,7,0,7,,,,2013-07-15 15:00,2013-07-16 12:00,,2013-06-25 13:00,2013-06-26 10:00,2013-06-25 13:00,2013-06-26 10:00,2013-06-25 13:00,2013-06-26 10:00,,2013-07-15 15:00,2013-07-16 12:00,,PT_Normal,,,,,G70g5r0zB0WLrbh4D7AV8w,a7X7Is84RCuvjFUZbO0yIQ,,,N,0,0,,,2013-06-23 13:00,2013-06-23 13:00,admin,admin
20,85105,1346,11535,1473,1,0,N,N,N,CP_Phys,TT_Task,DT_FixedDrtn,RV_OK,TK_NotStart,A14750,Reinforcement Cutting & Bending for Abutment - Breast Walls,2970,415,0,50,0,230,230,50,100,0,100,,,,2013-07-09 12:00,2013-07-16 12:00,,2013-05-13 07:00,2013-05-19 17:00,2013-05-13 07:00,2013-05-19 17:00,2013-05-13 07:00,2013-05-19 17:00,,2013-07-09 12:00,2013-07-16 12:00,,PT_Normal,,,,,GxnLLurY4ky49eY2Rohkew,RTyaqVE8RXG3+RlR/zLTUA,,,N,0,0,,,2013-06-23 13:00,2013-06-23 13:00,admin,admin
21,85106,1346,11535,1473,1,0,N,N,N,CP_Phys,TT_Task,DT_FixedDrtn,RV_OK,TK_NotStart,A14760,Reinforcement Fixing for Abutment - Breast Walls,2969,142,0,9,0,57,57,9,9,0,9,,,,2013-07-16 12:00,2013-07-17 11:00,,2013-06-26 10:00,2013-06-29 09:00,2013-06-26 10:00,2013-06-29 09:00,2013-06-26 10:00,2013-06-29 09:00,,2013-07-16 12:00,2013-07-17 11:00,,PT_Normal,,,,,YDj/wHvNpkuJzyH8OrLuuQ,/AflYg4OTaWakva/FfFlJA,,,N,0,0,,,2013-06-23 13:00,2013-06-23 13:00,admin,admin
22,85107,1346,11535,1473,1,0,N,N,N,CP_Phys,TT_Task,DT_FixedDrtn,RV_OK,TK_NotStart,A14770,Setting Out for Abutment,2971,142,0,9,0,27,27,9,9,0,9,,,,2013-06-12 09:00,2013-06-15 08:00,,2013-05-25 07:00,2013-05-25 16:00,2013-05-25 07:00,2013-05-25 16:00,2013-05-25 07:00,2013-05-25 16:00,,2013-06-12 09:00,2013-06-15 08:00,,PT_Normal,,,,,+8WUfIurp0ibf1oQjXTrEw,uA9hPy10Sx6xLWcc8e05Ww,,,N,0,0,,,2013-06-23 13:00,2013-06-23 13:00,admin,admin
23,85108,1346,11535,1473,1,0,N,N,N,CP_Phys,TT_Task,DT_FixedDrtn,RV_OK,TK_NotStart,A14780,Concreting for Breast Walls,2971,142,0,9,0,139,139,9,68,0,68,,,,2013-07-17 11:00,2013-07-20 10:00,,2013-06-29 09:00,2013-06-30 08:00,2013-06-29 09:00,2013-06-30 08:00,2013-06-29 09:00,2013-06-30 08:00,,2013-07-17 11:00,2013-07-20 10:00,,PT_Normal,,,,,vM9pg7bZXEW3JYi5embIDQ,iS969FUeSBWq9PA4CdB11A,,,N,0,0,,,2013-06-23 13:00,2013-06-23 13:00,admin,admin
24,85109,1346,11535,1473,1,0,N,N,N,CP_Phys,TT_Task,DT_FixedDrtn,RV_OK,TK_NotStart,A14790,Dismantling of Complete Abutment Scaffolding,3002,142,0,8,0,56,56,8,0,0,0,,,,2013-07-22 08:00,2013-07-22 16:00,,2013-07-01 16:00,2013-07-02 14:00,2013-07-01 16:00,2013-07-02 14:00,2013-07-01 16:00,2013-07-02 14:00,,2013-07-22 08:00,2013-07-22 16:00,,PT_Normal,,,,,CLa5gfwQsk6CYfA051ImJw,701imVohRU+QAR665WYdSQ,,,N,0,0,,,2013-06-23 13:00,2013-06-23 13:00,admin,admin
25,85110,1346,11535,1473,1,0,N,N,N,CP_Phys,TT_Task,DT_FixedDrtn,RV_OK,TK_NotStart,A14800,"Application of Primer, Water Proofing Membrane & Protection Board",2971,152,0,20,0,80,80,20,0,0,0,,,,2013-07-23 16:00,2013-07-27 16:00,,2013-07-02 14:00,2013-07-06 14:00,2013-07-02 14:00,2013-07-06 14:00,2013-07-02 14:00,2013-07-06 14:00,,2013-07-23 16:00,2013-07-27 16:00,,PT_Normal,,,,,Y66DcsgxgkCO59v0d424nA,cq6Le/aLTXubVnu9KlAR7w,,,N,0,0,,,2013-06-23 13:00,2013-06-23 13:00,admin,admin
26,85111,1346,11535,1473,1,0,N,N,N,CP_Phys,TT_Task,DT_FixedDrtn,RV_OK,TK_NotStart,A14810,Application of Bitumen Mastic,2971,152,0,8,0,18,18,8,0,0,0,,,,2013-07-27 16:00,2013-07-28 14:00,,2013-07-06 14:00,2013-07-07 12:00,2013-07-06 14:00,2013-07-07 12:00,2013-07-06 14:00,2013-07-07 12:00,,2013-07-27 16:00,2013-07-28 14:00,,PT_Normal,,,,,ehSBJJJzy06jRsE4sBAH4g,oZ7eq8PdTiinrvAUJxc+/g,,,N,0,0,,,2013-06-23 13:00,2013-06-23 13:00,admin,admin
27,85112,1346,11535,1473,1,0,N,N,N,CP_Phys,TT_Task,DT_FixedDrtn,RV_OK,TK_NotStart,A14820,Concrete Screed for Balance Portion of PCC,2971,152,0,8,0,36,36,8,0,0,0,,,,2013-07-27 16:00,2013-07-28 14:00,,2013-07-06 14:00,2013-07-07 12:00,2013-07-06 14:00,2013-07-07 12:00,2013-07-06 14:00,2013-07-07 12:00,,2013-07-27 16:00,2013-07-28 14:00,,PT_Normal,,,,,WJRA4jMv4ESVVXHr8fetGg,nmhBzSyZSguWJmuTqVaiIQ,,,N,0,0,,,2013-06-23 13:00,2013-06-23 13:00,admin,admin
28,85113,1346,11535,1473,1,0,N,N,N,CP_Phys,TT_Task,DT_FixedDrtn,RV_OK,TK_NotStart,A14830,Completion of Abutment Construction  ABT - 2 WB,,152,0,8,0,0,0,8,0,0,0,,,,2013-07-27 16:00,2013-07-28 14:00,,2013-07-06 14:00,2013-07-07 12:00,2013-07-06 14:00,2013-07-07 12:00,2013-07-06 14:00,2013-07-07 12:00,,2013-07-27 16:00,2013-07-28 14:00,,PT_Normal,,,,,8YOtgSSLX0+DNb/4aS5t5A,w1ur/6AYQ8yFnyojV2qncQ,,,N,0,0,,,2013-06-23 13:00,2013-06-23 13:00,admin,admin
29,85114,1346,11536,1473,1,0,N,N,N,CP_Phys,TT_Task,DT_FixedDrtn,RV_OK,TK_NotStart,A14380,Erection of Scaffolding for Abutment - Lift 1,,142,0,27,0,296,296,27,16,0,16,,,,2013-07-14 16:00,2013-07-17 13:00,,2013-06-24 14:00,2013-06-29 11:00,2013-06-24 14:00,2013-06-29 11:00,2013-06-24 14:00,2013-06-29 11:00,,2013-07-14 16:00,2013-07-17 13:00,,PT_Normal,,,,,MtnDeDLdGEyxCPbo51iJvA,Y8OW/fuiTcasO4n3zr+pZA,,,N,0,0,,,2013-06-23 13:00,2013-06-23 13:00,admin,admin
30,85115,1346,11536,1473,1,0,N,N,N,CP_Phys,TT_Task,DT_FixedDrtn,RV_OK,TK_NotStart,A14390,Reinforcement Fixing for Abutment - Lift 1,2971,142,0,45,0,363,363,45,24,0,24,,,,2013-07-17 13:00,2013-07-24 08:00,,2013-06-29 11:00,2013-07-03 16:00,2013-06-29 11:00,2013-07-03 16:00,2013-06-29 11:00,2013-07-03 16:00,,2013-07-17 13:00,2013-07-24 08:00,,PT_Normal,,,,,hvTo0WkH10S3hzjiRfEC5w,T14oSxgTQxSAce7btzyx2w,,,N,0,0,,,2013-06-23 13:00,2013-06-23 13:00,admin,admin
31,85116,1346,11536,1473,1,0,N,N,N,CP_Phys,TT_Task,DT_FixedDrtn,RV_OK,TK_NotStart,A14400,Formwork for Abutment - Lift 1,2980,142,0,27,0,224,224,27,16,0,16,,,,2013-07-24 08:00,2013-07-28 15:00,,2013-07-03 16:00,2013-07-08 13:00,2013-07-03 16:00,2013-07-08 13:00,2013-07-03 16:00,2013-07-08 13:00,,2013-07-24 08:00,2013-07-28 15:00,,PT_Normal,,,,,wLA6wqhHF0OLHPF9dTNdsA,GLjJ1AfcRzGoWDYDzX5t9A,,,N,0,0,,,2013-06-23 13:00,2013-06-23 13:00,admin,admin
32,85117,1346,11536,1473,1,0,N,N,N,CP_Phys,TT_Task,DT_FixedDrtn,RV_OK,TK_NotStart,A14410,Concreting for Abutment - Lift 1,2969,142,0,8,0,56,56,8,56,0,56,,,,2013-07-28 15:00,2013-07-29 13:00,,2013-07-08 13:00,2013-07-09 11:00,2013-07-08 13:00,2013-07-09 11:00,2013-07-08 13:00,2013-07-09 11:00,,2013-07-28 15:00,2013-07-29 13:00,,PT_Normal,,,,,/845ZR1iqEajYhVDLNC3uw,dacgy3AdQXKgEsc9PvYPnQ,,,N,0,0,,,2013-06-23 13:00,2013-06-23 13:00,admin,admin
33,85118,1346,11536,1473,1,0,N,N,N,CP_Phys,TT_Task,DT_FixedDrtn,RV_OK,TK_NotStart,A14420,Removal of Formwork for Abutment - Lift 1,2980,142,0,20,0,64,64,20,8,0,8,,,,2013-07-30 11:00,2013-08-03 11:00,,2013-07-10 09:00,2013-07-14 09:00,2013-07-10 09:00,2013-07-14 09:00,2013-07-10 09:00,2013-07-14 09:00,,2013-07-30 11:00,2013-08-03 11:00,,PT_Normal,,,,,Nbpcp7gfBEuP+7TNJW5+2Q,/AD+AgUbRyel+J5T3IMLGg,,,N,0,0,,,2013-06-23 13:00,2013-06-23 13:00,admin,admin
34,85119,1346,11536,1473,1,0,N,N,N,CP_Phys,TT_Task,DT_FixedDrtn,RV_OK,TK_NotStart,A14430,Erection of Scaffolding for Abutment  - Lift 2,,142,0,18,0,160,160,18,16,0,16,,,,2013-08-03 11:00,2013-08-05 09:00,,2013-07-14 09:00,2013-07-15 17:00,2013-07-14 09:00,2013-07-15 17:00,2013-07-14 09:00,2013-07-15 17:00,,2013-08-03 11:00,2013-08-05 09:00,,PT_Normal,,,,,GZ3dLDOk6UirsbKHpOlhMQ,fsVUn5yDQbCCe9sOG9bwLQ,,,N,0,0,,,2013-06-23 13:00,2013-06-23 13:00,admin,admin
35,85120,1346,11536,1473,1,0,N,N,N,CP_Phys,TT_Task,DT_FixedDrtn,RV_OK,TK_NotStart,A14440,Reinforcement Fixing for Abutment - Lift 2,2971,142,0,18,0,162,162,18,18,0,18,,,,2013-08-05 09:00,2013-08-06 17:00,,2013-07-16 07:00,2013-07-17 15:00,2013-07-16 07:00,2013-07-17 15:00,2013-07-16 07:00,2013-07-17 15:00,,2013-08-05 09:00,2013-08-06 17:00,,PT_Normal,,,,,4ZUTYuvk5kejM/lGqjwlzQ,XdgEXyMURFyoeDog1t1wrA,,,N,0,0,,,2013-06-23 13:00,2013-06-23 13:00,admin,admin
36,85121,1346,11536,1473,1,0,N,N,N,CP_Phys,TT_Task,DT_FixedDrtn,RV_OK,TK_NotStart,A14450,Formwork for Abutment - Lift 2,2980,142,0,18,0,162,162,18,18,0,18,,,,2013-08-07 07:00,2013-08-12 15:00,,2013-07-17 15:00,2013-07-21 13:00,2013-07-17 15:00,2013-07-21 13:00,2013-07-17 15:00,2013-07-21 13:00,,2013-08-07 07:00,2013-08-12 15:00,,PT_Normal,,,,,tiNJp5pr7UWWRE6hGSX2vA,KJMTMgwyTDWYxihxgvpK+A,,,N,0,0,,,2013-06-23 13:00,2013-06-23 13:00,admin,admin
37,85122,1346,11536,1473,1,0,N,N,N,CP_Phys,TT_Task,DT_FixedDrtn,RV_OK,TK_NotStart,A14460,Concreting for Abutment - Lift 2,2969,142,0,8,0,56,56,8,56,0,56,,,,2013-08-12 15:00,2013-08-13 13:00,,2013-07-21 13:00,2013-07-22 11:00,2013-07-21 13:00,2013-07-22 11:00,2013-07-21 13:00,2013-07-22 11:00,,2013-08-12 15:00,2013-08-13 13:00,,PT_Normal,,,,,bGfn+/VdgEy3i+diX9cjtg,K/11Cw+jSISyWxxdV+cepw,,,N,0,0,,,2013-06-23 13:00,2013-06-23 13:00,admin,admin
38,85123,1346,11536,1473,1,0,N,N,N,CP_Phys,TT_Task,DT_FixedDrtn,RV_OK,TK_NotStart,A14470,Removal of Formwork for Abutment - Lift 2,2980,142,0,22,0,132,132,22,22,0,22,,,,2013-08-14 11:00,2013-08-18 13:00,,2013-07-23 09:00,2013-07-27 11:00,2013-07-23 09:00,2013-07-27 11:00,2013-07-23 09:00,2013-07-27 11:00,,2013-08-14 11:00,2013-08-18 13:00,,PT_Normal,,,,,PKsp6HUVhkyKf8K/POrOog,ZGML8yFlQfy074ckAtrQXQ,,,N,0,0,,,2013-06-23 13:00,2013-06-23 13:00,admin,admin
39,85124,1346,11536,1473,1,0,N,N,N,CP_Phys,TT_Task,DT_FixedDrtn,RV_OK,TK_NotStart,A14480,Removal of Formwork for Abutment - Breast Wall,2980,142,0,18,0,72,72,18,0,0,0,,,,2013-08-21 08:00,2013-08-24 16:00,,2013-07-29 16:00,2013-07-31 14:00,2013-07-29 16:00,2013-07-31 14:00,2013-07-29 16:00,2013-07-31 14:00,,2013-08-21 08:00,2013-08-24 16:00,,PT_Normal,,,,,TSURoKzy7kiLLQn+YMPnAQ,bxjNLuC5RWega2fgUlZMJw,,,N,0,0,,,2013-06-23 13:00,2013-06-23 13:00,admin,admin
40,85125,1346,11536,1473,1,0,N,N,N,CP_Phys,TT_Task,DT_FixedDrtn,RV_OK,TK_NotStart,A14490,Reinforcement Cutting & Bending for Abutment - Lift 1,2970,503,0,50,0,100.000001,100.000001,50,13.333332,0,13.333332,,,,2013-07-17 10:00,2013-07-24 10:00,,2013-05-08 07:00,2013-05-14 17:00,2013-05-08 07:00,2013-05-14 17:00,2013-05-08 07:00,2013-05-14 17:00,,2013-07-17 10:00,2013-07-24 10:00,,PT_Normal,,,,,OWG4fQkcQk+6Zwhy+NTCYg,lr1Y282aRvS8JU9TDBjKXA,,,N,0,0,,,2013-06-23 13:00,2013-06-23 13:00,admin,admin
41,85126,1346,11536,1473,1,0,N,N,N,CP_Phys,TT_Task,DT_FixedDrtn,RV_OK,TK_NotStart,A14500,Reinforcement Cutting & Bending for Abutment - Lift 2,2970,503,0,50,0,150,150,50,20,0,20,,,,2013-07-22 10:00,2013-07-29 10:00,,2013-05-13 07:00,2013-05-19 17:00,2013-05-13 07:00,2013-05-19 17:00,2013-05-13 07:00,2013-05-19 17:00,,2013-07-22 10:00,2013-07-29 10:00,,PT_Normal,,,,,ylcHMQtaJE2Z5Wm0KGfyXw,nRZ72bPvQ2iakDIxECYP4g,,,N,0,0,,,2013-06-23 13:00,2013-06-23 13:00,admin,admin
42,85127,1346,11536,1473,1,0,N,N,N,CP_Phys,TT_Task,DT_FixedDrtn,RV_OK,TK_NotStart,A14510,Erection of Scaffolding for Abutment - Breast Walls,2971,142,0,7,0,35,35,7,7,0,7,,,,2013-08-18 13:00,2013-08-19 10:00,,2013-07-27 11:00,2013-07-28 08:00,2013-07-27 11:00,2013-07-28 08:00,2013-07-27 11:00,2013-07-28 08:00,,2013-08-18 13:00,2013-08-19 10:00,,PT_Normal,,,,,gjcok2pnnkO7KU/+iQ85fA,o07szBilTbSSoacAHlRCdA,,,N,0,0,,,2013-06-23 13:00,2013-06-23 13:00,admin,admin
43,85128,1346,11536,1473,1,0,N,N,N,CP_Phys,TT_Task,DT_FixedDrtn,RV_OK,TK_NotStart,A14520,Reinforcement Cutting & Bending for Abutment - Breast Walls,2970,503,361,150,0,180,180,150,60,0,60,,,,2013-07-27 10:00,2013-08-19 10:00,,2013-05-18 07:00,2013-06-05 17:00,2013-05-18 07:00,2013-06-05 17:00,2013-05-18 07:00,2013-06-05 17:00,,2013-07-27 10:00,2013-08-19 10:00,,PT_Normal,,,,,TXVodGFtVkWSwWTRiuOeVg,3FH8fwabQquWNYl+7xaNcw,,,N,0,0,,,2013-06-23 13:00,2013-06-23 13:00,admin,admin
44,85129,1346,11536,1473,1,0,N,N,N,CP_Phys,TT_Task,DT_FixedDrtn,RV_OK,TK_NotStart,A14530,Reinforcement Fixing for Abutment - Breast Walls,2971,142,0,9,0,72,72,9,9,0,9,,,,2013-08-19 10:00,2013-08-20 09:00,,2013-07-28 08:00,2013-07-28 17:00,2013-07-28 08:00,2013-07-28 17:00,2013-07-28 08:00,2013-07-28 17:00,,2013-08-19 10:00,2013-08-20 09:00,,PT_Normal,,,,,JkP6W/EZiUGyIG+cocnqbQ,GB7hWKklR/6gy88nH/8RCQ,,,N,0,0,,,2013-06-23 13:00,2013-06-23 13:00,admin,admin
45,85130,1346,11536,1473,1,0,N,N,N,CP_Phys,TT_Task,DT_FixedDrtn,RV_OK,TK_NotStart,A14540,Setting Out for Abutment,2971,142,0,9,0,18,18,9,0,0,0,,,,2013-07-14 07:00,2013-07-14 16:00,,2013-06-23 15:00,2013-06-24 14:00,2013-06-23 15:00,2013-06-24 14:00,2013-06-23 15:00,2013-06-24 14:00,,2013-07-14 07:00,2013-07-14 16:00,,PT_Normal,,,,,7XNwGdOxVkSInPYoPFlRiQ,Lyfi/9GLQnmMBwESY0xEeA,,,N,0,0,,,2013-06-23 13:00,2013-06-23 13:00,admin,admin
46,85131,1346,11536,1473,1,0,N,N,N,CP_Phys,TT_Task,DT_FixedDrtn,RV_OK,TK_NotStart,A14550,Concreting for Breast Walls,2971,142,0,9,0,36,36,9,45,0,45,,,,2013-08-20 09:00,2013-08-21 08:00,,2013-07-29 07:00,2013-07-29 16:00,2013-07-29 07:00,2013-07-29 16:00,2013-07-29 07:00,2013-07-29 16:00,,2013-08-20 09:00,2013-08-21 08:00,,PT_Normal,,,,,0negbmQOjkaMCzoz3uiJMw,RA/ULkadRDez2ygPjpGsUg,,,N,0,0,,,2013-06-23 13:00,2013-06-23 13:00,admin,admin
47,85132,1346,11536,1473,1,0,N,N,N,CP_Phys,TT_Task,DT_FixedDrtn,RV_OK,TK_NotStart,A14560,Dismantling of Complete Abutment Scaffolding,2980,142,0,8,0,32,32,8,0,0,0,,,,2013-08-24 16:00,2013-08-25 14:00,,2013-07-31 14:00,2013-08-03 12:00,2013-07-31 14:00,2013-08-03 12:00,2013-07-31 14:00,2013-08-03 12:00,,2013-08-24 16:00,2013-08-25 14:00,,PT_Normal,,,,,RnuW1Vj4M0qkLmNxsVlw0w,kBxa0n2aTti804DFkLQsIQ,,,N,0,0,,,2013-06-23 13:00,2013-06-23 13:00,admin,admin
48,85133,1346,11536,1473,1,0,N,N,N,CP_Phys,TT_Task,DT_FixedDrtn,RV_OK,TK_NotStart,A14570,"Application of Primer, Water Proofing Membrane & Protection Board",2971,142,0,20,0,40,40,20,0,0,0,,,,2013-08-25 14:00,2013-08-27 14:00,,2013-08-03 12:00,2013-08-05 12:00,2013-08-03 12:00,2013-08-05 12:00,2013-08-03 12:00,2013-08-05 12:00,,2013-08-25 14:00,2013-08-27 14:00,,PT_Normal,,,,,aEmrwQ7vyE6fmqdeYc7QfQ,PW5UQ5MTRzSvAybzUlgb7g,,,N,0,0,,,2013-06-23 13:00,2013-06-23 13:00,admin,admin
49,85134,1346,11536,1473,1,0,N,N,N,CP_Phys,TT_Task,DT_FixedDrtn,RV_OK,TK_NotStart,A14580,Application of Bitumen Mastic,2971,142,0,8,0,16,16,8,0,0,0,,,,2013-08-27 14:00,2013-08-28 12:00,,2013-08-05 12:00,2013-08-06 10:00,2013-08-05 12:00,2013-08-06 10:00,2013-08-05 12:00,2013-08-06 10:00,,2013-08-27 14:00,2013-08-28 12:00,,PT_Normal,,,,,AAyV8FKKFEWR14tRYO1nVg,Nzl/n6s5R/iyvGbb+UjJDA,,,N,0,0,,,2013-06-23 13:00,2013-06-23 13:00,admin,admin
50,85135,1346,11536,1473,1,0,N,N,N,CP_Phys,TT_Task,DT_FixedDrtn,RV_OK,TK_NotStart,A14590,Concrete Screed for Balance Portion of PCC,2971,142,0,8,0,16,16,8,0,0,0,,,,2013-08-27 14:00,2013-08-28 12:00,,2013-08-05 12:00,2013-08-06 10:00,2013-08-05 12:00,2013-08-06 10:00,2013-08-05 12:00,2013-08-06 10:00,,2013-08-27 14:00,2013-08-28 12:00,,PT_Normal,,,,,ZUeP9oSbvE29C3NjGhIKeg,LKxKy49BTNO8NrR38vBgcg,,,N,0,0,,,2013-06-23 13:00,2013-06-23 13:00,admin,admin
51,85136,1346,11536,1473,1,0,N,N,N,CP_Phys,TT_Task,DT_FixedDrtn,RV_OK,TK_NotStart,A14600,Completion of Abutment Construction  ABT - 1 EB,,142,22,8,0,0,0,8,0,0,0,,,,2013-08-27 14:00,2013-08-28 12:00,,2013-08-05 12:00,2013-08-06 10:00,2013-08-05 12:00,2013-08-06 10:00,2013-08-05 12:00,2013-08-06 10:00,,2013-08-27 14:00,2013-08-28 12:00,,PT_Normal,,,,,tWyG7KdD9kOWpFEWOQ/Svg,kHsTRKRRR86dTRqhGuelZw,,,N,0,0,,,2013-06-23 13:00,2013-06-23 13:00,admin,admin
52,85137,1346,11537,1473,1,100,N,N,N,CP_Phys,TT_Task,DT_FixedDrtn,RV_OK,TK_Complete,A10500,Setting Out for Raft Foundations,2983,,,0,58,0,58,18,18,0,0,,2013-01-19 00:00,2013-01-26 00:00,2013-05-18 14:00,2013-05-18 14:00,,2013-04-23 00:00,2013-04-23 00:00,,,2013-04-23 07:00,2013-04-24 15:00,,,,,PT_Normal,,,,,a6eqn0HllkGfQFBQXDoLNg,+O3Fm18gQTGDZjLwIth/WQ,,,N,58,0,,,2013-06-23 13:00,2013-06-23 13:00,admin,admin
53,85138,1346,11537,1473,1,100,N,N,N,CP_Phys,TT_Task,DT_FixedDrtn,RV_OK,TK_Complete,A10510,Structural Excavation,2984,,,0,195,0,195,45,245,245,0,,2013-01-26 00:00,2013-02-02 00:00,2013-05-18 14:00,2013-05-18 14:00,,2013-04-23 00:00,2013-04-23 00:00,,,2013-04-23 07:00,2013-04-29 12:00,,,,,PT_Normal,,,,,q5oi00BsKEeIqb7rgq00oQ,nh9ijU/2R6OKUgqLHP8WpA,,,N,195,245,,,2013-06-23 13:00,2013-06-23 13:00,admin,admin
54,85139,1346,11537,1473,1,50,N,N,N,CP_Phys,TT_Task,DT_FixedDrtn,RV_OK,TK_Active,A10520,Foundation Beds Preparation,2971,177,0,0,245,0,245,45,0,0,0,,2013-02-02 00:00,,2013-05-18 14:00,2013-05-18 14:00,,2013-04-23 07:00,2013-04-23 07:00,2013-04-23 07:00,2013-04-23 07:00,2013-04-23 07:00,2013-04-29 12:00,,2013-05-18 14:00,2013-05-18 14:00,,PT_Normal,,,,,gTYeziAqP0udceW29puF9w,b9QdNhMsSy+b6ja1//dkwQ,,,N,245,0,,,2013-06-23 13:00,2013-06-23 13:00,admin,admin
55,85140,1346,11537,1473,1,50,N,N,N,CP_Phys,TT_Task,DT_FixedDrtn,RV_OK,TK_Active,A10530,Placing of Blinding Concrete,2969,177,0,9,0,347,62,9,16,0,16,,2013-02-16 00:00,,2013-05-18 14:00,2013-05-19 13:00,,2013-04-23 07:00,2013-04-23 16:00,2013-04-23 07:00,2013-04-23 16:00,2013-04-23 07:00,2013-04-23 16:00,,2013-05-18 14:00,2013-05-19 13:00,,PT_Normal,,,,,FYE9QxRSzkGUDV4hVbsMrg,W6szY3W2SV+8d9CWHk302g,,,N,0,0,,,2013-06-23 13:00,2013-06-23 13:00,admin,admin
56,85141,1346,11537,1473,1,50,N,N,N,CP_Phys,TT_Task,DT_FixedDrtn,RV_OK,TK_Active,A10540,Reinforcement Fixing for Raft Foundations,2970,141,0,63,0,639,830,50,60,0,36,,2013-03-11 00:00,,2013-05-25 08:00,2013-06-02 11:00,,2013-05-05 07:00,2013-05-13 10:00,2013-05-05 07:00,2013-05-13 10:00,2013-05-05 07:00,2013-05-11 17:00,,2013-05-25 08:00,2013-06-02 11:00,,PT_Normal,,,,,agWexhNw1E2fHa3GzI99Hg,h7TS0DsDTJSOPNqQAmOC7w,,,N,0,0,,,2013-06-23 13:00,2013-06-23 13:00,admin,admin
57,85142,1346,11537,1473,1,50,N,N,N,CP_Phys,TT_Task,DT_FixedDrtn,RV_OK,TK_Active,A10550,Formwork for Raft Foundations,,141,0,27,0,188,420,27,30,0,16,,2013-03-20 00:00,,2013-06-02 11:00,2013-06-05 08:00,,2013-05-13 10:00,2013-05-15 17:00,2013-05-13 10:00,2013-05-15 17:00,2013-05-13 10:00,2013-05-15 17:00,,2013-06-02 11:00,2013-06-05 08:00,,PT_Normal,,,,,uYkr9Ym5JUqUW/jhWxycTA,L38kEeGeQt2b4c9oIfpDww,,,N,0,0,,,2013-06-23 13:00,2013-06-23 13:00,admin,admin
58,85143,1346,11537,1473,1,50,N,N,N,CP_Phys,TT_Task,DT_FixedDrtn,RV_OK,TK_Active,A10560,Concreting for Raft Foundations,2969,141,0,9,0,107,169,9,109,0,101,,2013-03-24 00:00,,2013-06-05 08:00,2013-06-05 17:00,,2013-05-18 07:00,2013-05-18 16:00,2013-05-18 07:00,2013-05-18 16:00,2013-05-18 07:00,2013-05-18 16:00,,2013-06-05 08:00,2013-06-05 17:00,,PT_Normal,,,,,Po8endSM9EakwOVpOX0dMw,kVou5eBoRHuSy5d39wPXcA,,,N,0,0,,,2013-06-23 13:00,2013-06-23 13:00,admin,admin
59,85144,1346,11537,1473,1,100,N,N,N,CP_Phys,TT_Task,DT_FixedDrtn,RV_OK,TK_Complete,A10570,Preparation & Submission of Bar Schedule Drawings,,,,0,0,0,0,80,0,0,0,,2013-01-05 00:00,2013-01-15 00:00,2013-05-08 13:00,2013-05-08 13:00,,2013-04-23 00:00,2013-04-23 00:00,,,2013-05-05 07:00,2013-05-14 17:00,,,,,PT_Normal,,,,,iyQRyMBqFUWn28eUFnDfhw,7agqxyxzR22LP58wCy9ZRw,,,N,0,0,,,2013-06-23 13:00,2013-06-23 13:00,admin,admin
60,85145,1346,11537,1473,1,100,N,N,N,CP_Phys,TT_Task,DT_FixedDrtn,RV_OK,TK_Complete,A10580,Approval for Bar Schedule Drawings,,,,0,0,0,0,140,0,0,0,,2013-01-15 00:00,2013-01-29 00:00,2013-05-13 08:00,2013-05-13 08:00,,2013-04-23 00:00,2013-04-23 00:00,,,2013-05-15 07:00,2013-06-03 17:00,,,,,PT_Normal,,,,,OAN7xHVR806j803WtPwHTQ,BeQsDNW9RdqmCmBmwZPS0w,,,N,0,0,,,2013-06-23 13:00,2013-06-23 13:00,admin,admin
61,85146,1346,11537,1473,1,100,N,N,N,CP_Phys,TT_Task,DT_FixedDrtn,RV_OK,TK_Complete,A10590,Preparation & Submission of Shop Drawings,,,,0,0,0,0,80,0,0,0,,2012-12-23 00:00,2013-01-05 00:00,2013-05-08 13:00,2013-05-08 13:00,,2013-04-23 00:00,2013-04-23 00:00,,,2013-04-23 07:00,2013-05-04 17:00,,,,,PT_Normal,,,,,z1D0BDQSHE+mrE/v1Yd2Cg,2g7i5dkiRBKogdprioGYEw,,,N,0,0,,,2013-06-23 13:00,2013-06-23 13:00,admin,admin
62,85147,1346,11537,1473,1,100,N,N,N,CP_Phys,TT_Task,DT_FixedDrtn,RV_OK,TK_Complete,A10600,Approval for Shop Drawings,,,,0,0,0,0,140,0,0,0,,2013-01-05 00:00,2013-01-19 00:00,2013-05-18 14:00,2013-05-18 14:00,,2013-04-23 00:00,2013-04-23 00:00,,,2013-05-05 07:00,2013-05-22 17:00,,,,,PT_Normal,,,,,enlm7IJqXEmtNlHxqR2TuA,i5ahJqAiSdeDn3D3p40zbA,,,N,0,0,,,2013-06-23 13:00,2013-06-23 13:00,admin,admin
63,85148,1346,11537,1473,1,50,N,N,N,CP_Phys,TT_Task,DT_FixedDrtn,RV_OK,TK_Active,A10610,Application of Water Proofing Membrane,2971,177,0,27,0,99,150,20,0,0,0,,2013-03-02 00:00,,2013-05-19 13:00,2013-05-22 10:00,,2013-04-23 16:00,2013-04-28 13:00,2013-04-23 16:00,2013-04-28 13:00,2013-04-23 16:00,2013-04-27 16:00,,2013-05-19 13:00,2013-05-22 10:00,,PT_Normal,,,,,t5wcMxWwLEax3/1zh3+yBw,aKO8LQ7bSl2iqGYVgufHgw,,,N,0,0,,,2013-06-23 13:00,2013-06-23 13:00,admin,admin
64,85149,1346,11537,1473,1,50,N,N,N,CP_Phys,TT_Task,DT_FixedDrtn,RV_OK,TK_Active,A10620,Reinforcement Cutting & Bending for Raft Foundations,2971,141,0,80,0,800,2010,50,100,0,42.666668,,2013-01-29 00:00,,2013-05-13 08:00,2013-05-25 08:00,,2013-04-23 07:00,2013-05-04 17:00,2013-04-23 07:00,2013-05-04 17:00,2013-04-23 07:00,2013-04-29 17:00,,2013-05-13 08:00,2013-05-25 08:00,,PT_Normal,,,,,B3uONAXUoEqGRDF0dl9r+w,m/+mFH5ZTu67gbqsVd7FVA,,,N,0,0,,,2013-06-23 13:00,2013-06-23 13:00,admin,admin
65,85150,1346,11537,1473,1,50,N,N,N,CP_Phys,TT_Task,DT_FixedDrtn,RV_OK,TK_Active,A10630,Removal of Formwork for Raft Foundations,2980,165,23,18,104,126,260,30,30,12,18,,2013-03-27 00:00,,2013-06-10 11:00,2013-06-12 09:00,,2013-05-18 16:00,2013-05-20 14:00,2013-05-18 16:00,2013-05-20 14:00,2013-05-18 16:00,2013-05-21 16:00,,2013-06-10 11:00,2013-06-12 09:00,,PT_Normal,,,,,nGOlcoAofkaDALD8SSUNaA,DHDLBnAtSLmWlk39oiFFqQ,,,N,104,12,,,2013-06-23 13:00,2013-06-23 13:00,admin,admin
66,85151,1346,11537,1473,1,50,N,N,N,CP_Phys,TT_Task,DT_FixedDrtn,RV_OK,TK_Active,A10640,Screed Concreting,2969,177,36,8,132,24,180,30,0,0,0,,2013-03-09 00:00,,2013-05-22 10:00,2013-05-25 08:00,,2013-04-28 13:00,2013-04-29 11:00,2013-04-28 13:00,2013-04-29 11:00,2013-04-28 13:00,2013-05-01 13:00,,2013-05-22 10:00,2013-05-25 08:00,,PT_Normal,,,,,GAT4OJ7tnUC/YO1JRtklFg,9zR7E45QQbmc561FH8jhKw,,,N,132,0,,,2013-06-23 13:00,2013-06-23 13:00,admin,admin
67,85152,1346,11537,1474,1,50,N,N,N,CP_Phys,TT_Task,DT_FixedDrtn,RV_OK,TK_Active,A10650,Curing for Raft Foundations,2971,198,16,45,33.333333,45,133.333333,60,0,0,0,,2013-03-30 00:00,,2013-06-07 14:00,2013-06-12 09:00,,2013-05-18 16:00,2013-05-23 11:00,2013-05-18 16:00,2013-05-23 11:00,2013-05-18 16:00,2013-05-24 16:00,,2013-06-07 14:00,2013-06-12 09:00,,PT_Normal,,,,,tUze72NvMUSBU+yYIz5P9w,NHUzWRaiQkODlcYc2auisw,,,N,33.333333,0,,,2013-06-23 13:00,2013-06-23 13:00,admin,admin
68,85153,1346,11537,1473,1,0,N,N,N,CP_Phys,TT_Task,DT_FixedDrtn,RV_OK,TK_Active,A10660,Completion of Raft Foundations for Abutment 2 WB & EB,,142,0,8,0,0,0,8,0,0,0,,2013-04-06 00:00,,2013-06-11 11:00,2013-06-12 09:00,,2013-05-22 09:00,2013-05-25 07:00,2013-05-22 09:00,2013-05-25 07:00,2013-05-22 13:00,2013-05-25 11:00,,2013-06-11 11:00,2013-06-12 09:00,,PT_Normal,,,,,+iPA8SCEPEyNzFh/Y5OsXA,YMQHv2JGRgCuyngRmzjrVg,,,N,0,0,,,2013-06-23 13:00,2013-06-23 13:00,admin,admin
69,85154,1346,11537,1473,1,50,N,N,N,CP_Phys,TT_Task,DT_FixedDrtn,RV_OK,TK_Active,A10670,Plate Load Testing & Submission of Reports,,177,0,0,0,0,0,45,0,0,0,,2013-02-09 00:00,,2013-05-18 14:00,2013-05-18 14:00,,2013-04-23 07:00,2013-04-23 07:00,2013-04-23 07:00,2013-04-23 07:00,2013-04-23 07:00,2013-04-29 12:00,,2013-05-18 14:00,2013-05-18 14:00,,PT_Normal,,,,,LxeIff7HdkGnXzqPkHC2Rw,9J2WqGArQq+01rJO8L7zbw,,,N,0,0,,,2013-06-23 13:00,2013-06-23 13:00,admin,admin
70,85155,1346,11514,1473,1,100,N,N,N,CP_Phys,TT_Task,DT_FixedDrtn,RV_OK,TK_Complete,A10090,Setting Out for Raft Foundations,,,,0,32,0,32,18,0,0,0,,2013-02-26 00:00,2013-03-03 00:00,2013-05-13 09:00,2013-05-13 09:00,,2013-04-23 00:00,2013-04-23 00:00,,,2013-04-23 07:00,2013-04-24 15:00,,,,,PT_Normal,,,,,j+ZS9QEXBkemOialVwAqFg,fPcQQ0vcSv+0+7YnIHNYmQ,,,N,32,0,,,2013-06-23 13:00,2013-06-23 13:00,admin,admin
71,85156,1346,11514,1473,1,100,N,N,N,CP_Phys,TT_Task,DT_FixedDrtn,RV_OK,TK_Complete,A10100,Structural Excavation,2984,,,0,126,0,126,45,63,63,0,,2013-02-26 00:00,2013-03-05 00:00,2013-05-13 09:00,2013-05-13 09:00,,2013-04-23 00:00,2013-04-23 00:00,,,2013-04-24 15:00,2013-05-01 10:00,,,,,PT_Normal,,,,,ZzUNh358h0C3Px3TyGOxpw,FnXHQlJiSiiBfHjfO09s4A,,,N,126,63,,,2013-06-23 13:00,2013-06-23 13:00,admin,admin
72,85157,1346,11514,1473,1,100,N,N,N,CP_Phys,TT_Task,DT_FixedDrtn,RV_OK,TK_Complete,A10110,Foundation Beds Preparation,2971,,,0,180,0,180,45,0,0,0,,2013-03-05 00:00,2013-03-12 00:00,2013-05-13 09:00,2013-05-13 09:00,,2013-04-23 00:00,2013-04-23 00:00,,,2013-04-23 07:00,2013-04-29 12:00,,,,,PT_Normal,,,,,y9FTzioU5EuZWVlnxwEvuA,YDLcQcijQI2l6Urlyykj/w,,,N,180,0,,,2013-06-23 13:00,2013-06-23 13:00,admin,admin
73,85158,1346,11514,1473,1,0,N,N,N,CP_Phys,TT_Task,DT_FixedDrtn,RV_OK,TK_NotStart,A10120,Placing of Blinding Concrete,2969,142,0,9,0,49,49,9,16,0,16,,,,2013-05-13 09:00,2013-05-14 08:00,,2013-04-23 07:00,2013-04-23 16:00,2013-04-23 07:00,2013-04-23 16:00,2013-04-23 07:00,2013-04-23 16:00,,2013-05-13 09:00,2013-05-14 08:00,,PT_Normal,,,,,fXPUEfVBQ0WXQtDg4fsPSA,s8bABC+4R/uZeQZGrK9pXQ,,,N,0,0,,,2013-06-23 13:00,2013-06-23 13:00,admin,admin
74,85159,1346,11514,1473,1,0,N,N,N,CP_Phys,TT_Task,DT_FixedDrtn,RV_OK,TK_NotStart,A10130,Reinforcement Fixing for Raft Foundations,2970,142,0,50,0,457.142857,457.142857,50,28.571428,0,28.571428,,,,2013-05-18 16:00,2013-05-25 16:00,,2013-04-28 14:00,2013-05-05 14:00,2013-04-28 14:00,2013-05-05 14:00,2013-04-28 14:00,2013-05-05 14:00,,2013-05-18 16:00,2013-05-25 16:00,,PT_Normal,,,,,RU0AZYQqNEepMur+4hvHLw,dffccBhvR1CNFq3BoAMvaw,,,N,0,0,,,2013-06-23 13:00,2013-06-23 13:00,admin,admin
75,85160,1346,11514,1473,1,0,N,N,N,CP_Phys,TT_Task,DT_FixedDrtn,RV_OK,TK_NotStart,A10140,Formwork for Raft Foundations,,142,0,18,0,198,198,18,18,0,18,,,,2013-05-25 16:00,2013-05-27 14:00,,2013-05-05 14:00,2013-05-07 12:00,2013-05-05 14:00,2013-05-07 12:00,2013-05-05 14:00,2013-05-07 12:00,,2013-05-25 16:00,2013-05-27 14:00,,PT_Normal,,,,,GXS247WIo0SZMm13qwi6Gg,E6vvxqVCSyK+Eka8x+pdbw,,,N,0,0,,,2013-06-23 13:00,2013-06-23 13:00,admin,admin
76,85161,1346,11514,1473,1,0,N,N,N,CP_Phys,TT_Task,DT_FixedDrtn,RV_OK,TK_NotStart,A10150,Concreting for Raft Foundations,2969,142,0,9,0,89,89,9,101,0,101,,,,2013-05-27 14:00,2013-05-28 13:00,,2013-05-07 12:00,2013-05-08 11:00,2013-05-07 12:00,2013-05-08 11:00,2013-05-07 12:00,2013-05-08 11:00,,2013-05-27 14:00,2013-05-28 13:00,,PT_Normal,,,,,6CecKBMKdEqUAEbZB9Byvg,TLvIZB+qS0+QCi1I6g0Zfg,,,N,0,0,,,2013-06-23 13:00,2013-06-23 13:00,admin,admin
77,85162,1346,11514,1473,1,100,N,N,N,CP_Phys,TT_Task,DT_FixedDrtn,RV_OK,TK_Complete,A10160,Preparation & Submission of Bar Schedule Drawings,,,,0,0,0,0,60,0,0,0,,2013-02-12 00:00,2013-02-20 00:00,2013-05-18 16:00,2013-05-18 16:00,,2013-04-23 00:00,2013-04-23 00:00,,,2013-05-01 07:00,2013-05-08 17:00,,,,,PT_Normal,,,,,7p0thhAuJkG1BEi5r5zMww,cuBBVNGZQNW8D47aFnAQtw,,,N,0,0,,,2013-06-23 13:00,2013-06-23 13:00,admin,admin
78,85163,1346,11514,1473,1,100,N,N,N,CP_Phys,TT_Task,DT_FixedDrtn,RV_OK,TK_Complete,A10170,Approval for Bar Schedule Drawings,,,,0,0,0,0,140,0,0,0,,2013-02-20 00:00,2013-03-06 00:00,2013-05-18 16:00,2013-05-18 16:00,,2013-04-23 00:00,2013-04-23 00:00,,,2013-05-11 07:00,2013-05-28 17:00,,,,,PT_Normal,,,,,T86GVVPJc0G9xgQQixTlwA,VdcQVDqrQ2GemJJmmT4RUQ,,,N,0,0,,,2013-06-23 13:00,2013-06-23 13:00,admin,admin
79,85164,1346,11514,1473,1,100,N,N,N,CP_Phys,TT_Task,DT_FixedDrtn,RV_OK,TK_Complete,A10180,Preparation & Submission of Shop Drawings,,,,0,0,0,0,60,0,0,0,,2013-02-02 00:00,2013-02-12 00:00,2013-05-13 09:00,2013-05-13 09:00,,2013-04-23 00:00,2013-04-23 00:00,,,2013-04-23 07:00,2013-04-30 17:00,,,,,PT_Normal,,,,,8zWw8eJQYUaVE/oxc3iEMA,qcYdsnDTTIyu8VjfPLEnrw,,,N,0,0,,,2013-06-23 13:00,2013-06-23 13:00,admin,admin
80,85165,1346,11514,1473,1,100,N,N,N,CP_Phys,TT_Task,DT_FixedDrtn,RV_OK,TK_Complete,A10190,Approval for Shop Drawings,,,,0,0,0,0,140,0,0,0,,2013-02-12 00:00,2013-02-26 00:00,2013-05-13 09:00,2013-05-13 09:00,,2013-04-23 00:00,2013-04-23 00:00,,,2013-05-01 07:00,2013-05-20 17:00,,,,,PT_Normal,,,,,WHb9gwD6n0CaVinjwN09LA,UW4DC0L7Q7aW0nUmm/DzZg,,,N,0,0,,,2013-06-23 13:00,2013-06-23 13:00,admin,admin
81,85166,1346,11514,1473,1,0,N,N,N,CP_Phys,TT_Task,DT_FixedDrtn,RV_OK,TK_NotStart,A10200,Application of Water Proofing Membrane,2971,142,0,20,0,53.333333,53.333333,20,0,0,0,,,,2013-05-14 08:00,2013-05-18 08:00,,2013-04-23 16:00,2013-04-27 16:00,2013-04-23 16:00,2013-04-27 16:00,2013-04-23 16:00,2013-04-27 16:00,,2013-05-14 08:00,2013-05-18 08:00,,PT_Normal,,,,,sJ/Qw6BIGU2Ls66Q7b4oeg,sy7Usow0S+Sb8cB9kT4ltw,,,N,0,0,,,2013-06-23 13:00,2013-06-23 13:00,admin,admin
82,85167,1346,11514,1473,1,100,N,N,N,CP_Phys,TT_Task,DT_FixedDrtn,RV_OK,TK_Complete,A10210,Reinforcement Cutting & Bending for Raft Foundations,2971,,,0,960,0,960,80,64,64,0,,2013-02-20 00:00,2013-03-04 00:00,2013-05-18 16:00,2013-05-18 16:00,,2013-04-23 00:00,2013-04-23 00:00,,,2013-04-23 07:00,2013-05-04 17:00,,,,,PT_Normal,,,,,TvqBMjIwpUe99QefCBSUVQ,jf1/7WaKSsuxiYxxuz1afQ,,,N,960,64,,,2013-06-23 13:00,2013-06-23 13:00,admin,admin
83,85168,1346,11514,1473,1,0,N,N,N,CP_Phys,TT_Task,DT_FixedDrtn,RV_OK,TK_NotStart,A10220,Removal of Formwork for Raft Foundations,2980,142,0,18,0,126,126,18,18,0,18,,,,2013-06-04 08:00,2013-06-05 16:00,,2013-05-14 16:00,2013-05-18 14:00,2013-05-14 16:00,2013-05-18 14:00,2013-05-14 16:00,2013-05-18 14:00,,2013-06-04 08:00,2013-06-05 16:00,,PT_Normal,,,,,XxvcWakF8kGQ7yHj8E7aDw,LAqggNABT1esiI8F6NCjmA,,,N,0,0,,,2013-06-23 13:00,2013-06-23 13:00,admin,admin
84,85169,1346,11514,1473,1,0,N,N,N,CP_Phys,TT_Task,DT_FixedDrtn,RV_OK,TK_NotStart,A10230,Screed Concreting,,142,0,8,0,0,0,8,0,0,0,,,,2013-05-18 08:00,2013-05-18 16:00,,2013-04-27 16:00,2013-04-28 14:00,2013-04-27 16:00,2013-04-28 14:00,2013-04-27 16:00,2013-04-28 14:00,,2013-05-18 08:00,2013-05-18 16:00,,PT_Normal,,,,,X7q36wf9MUOQUo268nf3vA,OyLMmpRaTFW0Oxug7bT5qg,,,N,0,0,,,2013-06-23 13:00,2013-06-23 13:00,admin,admin
85,85170,1346,11514,1473,1,0,N,N,N,CP_Phys,TT_Task,DT_FixedDrtn,RV_OK,TK_NotStart,A10240,Curing for Raft Foundations,2971,142,0,45,0,100,100,45,0,0,0,,,,2013-05-28 13:00,2013-06-04 08:00,,2013-05-08 11:00,2013-05-14 16:00,2013-05-08 11:00,2013-05-14 16:00,2013-05-08 11:00,2013-05-14 16:00,,2013-05-28 13:00,2013-06-04 08:00,,PT_Normal,,,,,VcozQQsEH0yPdE6gEZcNsA,AVL557nDS0GO8svaAC5VfQ,,,N,0,0,,,2013-06-23 13:00,2013-06-23 13:00,admin,admin
86,85171,1346,11514,1473,1,0,N,N,N,CP_Phys,TT_Task,DT_FixedDrtn,RV_OK,TK_NotStart,A10250,Completion of Raft Foundations for Abutment  1 - WB & EB,,142,0,8,0,0,0,8,0,0,0,,,,2013-06-05 08:00,2013-06-05 16:00,,2013-05-15 16:00,2013-05-18 14:00,2013-05-15 16:00,2013-05-18 14:00,2013-05-15 16:00,2013-05-18 14:00,,2013-06-05 08:00,2013-06-05 16:00,,PT_Normal,,,,,v08yCZHG9UKCj8ldhneMAg,FG00O24iR5yGiCgBaeIxbw,,,N,0,0,,,2013-06-23 13:00,2013-06-23 13:00,admin,admin
87,85172,1346,11514,1473,1,100,N,N,N,CP_Phys,TT_Task,DT_FixedDrtn,RV_OK,TK_Complete,A10260,Plate Load Testing & Submission of Reports,,,,0,0,0,0,40,0,0,0,,2013-03-12 00:00,2013-03-18 00:00,2013-05-13 09:00,2013-05-13 09:00,,2013-04-23 00:00,2013-04-23 00:00,,,2013-04-23 07:00,2013-04-28 17:00,,,,,PT_Normal,,,,,e5sk/hkz0Uyk/ckf4xUvIg,UsMeGWiLScCOKVn14RyZ6w,,,N,0,0,,,2013-06-23 13:00,2013-06-23 13:00,admin,admin
88,85173,1346,11515,1473,1,0,N,N,N,CP_Phys,TT_Task,DT_FixedDrtn,RV_OK,TK_NotStart,A14150,Erection of Scaffolding for Abutment - Lift 1,,142,0,27,0,296,296,27,16,0,16,,,,2013-07-22 16:00,2013-07-27 13:00,,2013-07-02 14:00,2013-07-07 11:00,2013-07-02 14:00,2013-07-07 11:00,2013-07-02 14:00,2013-07-07 11:00,,2013-07-22 16:00,2013-07-27 13:00,,PT_Normal,,,,,ReevjWESAke/sa0mIsqozQ,wOIEPsjOS4Gf/sYOCdrJuw,,,N,0,0,,,2013-06-23 13:00,2013-06-23 13:00,admin,admin
89,85174,1346,11515,1473,1,0,N,N,N,CP_Phys,TT_Task,DT_FixedDrtn,RV_OK,TK_NotStart,A14160,Reinforcement Fixing for Abutment - Lift 1,2971,142,0,45,0,363,363,45,24,0,24,,,,2013-07-27 13:00,2013-08-03 08:00,,2013-07-07 11:00,2013-07-13 16:00,2013-07-07 11:00,2013-07-13 16:00,2013-07-07 11:00,2013-07-13 16:00,,2013-07-27 13:00,2013-08-03 08:00,,PT_Normal,,,,,8UGeIOttOE60y8FlVqYbHQ,ulA3fMwaTqCLl4qWS430qg,,,N,0,0,,,2013-06-23 13:00,2013-06-23 13:00,admin,admin
90,85175,1346,11515,1473,1,0,N,N,N,CP_Phys,TT_Task,DT_FixedDrtn,RV_OK,TK_NotStart,A14170,Formwork for Abutment - Lift 1,2980,142,0,27,0,224,224,27,16,0,16,,,,2013-08-03 08:00,2013-08-05 15:00,,2013-07-13 16:00,2013-07-16 13:00,2013-07-13 16:00,2013-07-16 13:00,2013-07-13 16:00,2013-07-16 13:00,,2013-08-03 08:00,2013-08-05 15:00,,PT_Normal,,,,,OG3sguQqcUymddxlY4fY7Q,b9UNMHmeRgOJDLqC5QBdFw,,,N,0,0,,,2013-06-23 13:00,2013-06-23 13:00,admin,admin
91,85176,1346,11515,1473,1,0,N,N,N,CP_Phys,TT_Task,DT_FixedDrtn,RV_OK,TK_NotStart,A14180,Concreting for Abutment - Lift 1,2969,142,0,8,0,56,56,8,56,0,56,,,,2013-08-05 15:00,2013-08-06 13:00,,2013-07-16 13:00,2013-07-17 11:00,2013-07-16 13:00,2013-07-17 11:00,2013-07-16 13:00,2013-07-17 11:00,,2013-08-05 15:00,2013-08-06 13:00,,PT_Normal,,,,,KZv8NUhM1EWsoJo6UMPxYQ,cX5XQErKSXuduAyVhyg6qA,,,N,0,0,,,2013-06-23 13:00,2013-06-23 13:00,admin,admin
92,85177,1346,11515,1473,1,0,N,N,N,CP_Phys,TT_Task,DT_FixedDrtn,RV_OK,TK_NotStart,A14190,Removal of Formwork for Abutment - Lift 1,2980,142,0,20,0,112,112,20,20,0,20,,,,2013-08-07 11:00,2013-08-13 11:00,,2013-07-20 09:00,2013-07-22 09:00,2013-07-20 09:00,2013-07-22 09:00,2013-07-20 09:00,2013-07-22 09:00,,2013-08-07 11:00,2013-08-13 11:00,,PT_Normal,,,,,eI97dARx40q4WzrvpjF/MA,VTNZuq7BSjSlKfBN1mhYkA,,,N,0,0,,,2013-06-23 13:00,2013-06-23 13:00,admin,admin
93,85178,1346,11515,1473,1,0,N,N,N,CP_Phys,TT_Task,DT_FixedDrtn,RV_OK,TK_NotStart,A14200,Erection of Scaffolding for Abutment  - Lift 2,,142,0,18,0,160,160,18,16,0,16,,,,2013-08-13 11:00,2013-08-17 09:00,,2013-07-22 09:00,2013-07-23 17:00,2013-07-22 09:00,2013-07-23 17:00,2013-07-22 09:00,2013-07-23 17:00,,2013-08-13 11:00,2013-08-17 09:00,,PT_Normal,,,,,AcIv2Nw2XESwpbp474KOlQ,d76RkDHeSD21sWUVR+eCUA,,,N,0,0,,,2013-06-23 13:00,2013-06-23 13:00,admin,admin
94,85179,1346,11515,1473,1,0,N,N,N,CP_Phys,TT_Task,DT_FixedDrtn,RV_OK,TK_NotStart,A14210,Reinforcement Fixing for Abutment - Lift 2,2971,142,0,18,0,162,162,18,18,0,18,,,,2013-08-17 09:00,2013-08-18 17:00,,2013-07-24 07:00,2013-07-27 15:00,2013-07-24 07:00,2013-07-27 15:00,2013-07-24 07:00,2013-07-27 15:00,,2013-08-17 09:00,2013-08-18 17:00,,PT_Normal,,,,,3HbL3MuQ1Ea6dhySzrnLRg,IU4gNuinQMqHVH5nqZYl3A,,,N,0,0,,,2013-06-23 13:00,2013-06-23 13:00,admin,admin
95,85180,1346,11515,1473,1,0,N,N,N,CP_Phys,TT_Task,DT_FixedDrtn,RV_OK,TK_NotStart,A14220,Formwork for Abutment - Lift 2,2980,142,0,18,0,162,162,18,18,0,18,,,,2013-08-19 07:00,2013-08-20 15:00,,2013-07-27 15:00,2013-07-29 13:00,2013-07-27 15:00,2013-07-29 13:00,2013-07-27 15:00,2013-07-29 13:00,,2013-08-19 07:00,2013-08-20 15:00,,PT_Normal,,,,,k2tdNrIlB0OJyUyPO1l5Rg,SsChg94fTlWHMqxoOzoc8g,,,N,0,0,,,2013-06-23 13:00,2013-06-23 13:00,admin,admin
96,85181,1346,11515,1473,1,0,N,N,N,CP_Phys,TT_Task,DT_FixedDrtn,RV_OK,TK_NotStart,A14230,Concreting for Abutment - Lift 2,2969,142,0,8,0,56,56,8,56,0,56,,,,2013-08-20 15:00,2013-08-21 13:00,,2013-07-29 13:00,2013-07-30 11:00,2013-07-29 13:00,2013-07-30 11:00,2013-07-29 13:00,2013-07-30 11:00,,2013-08-20 15:00,2013-08-21 13:00,,PT_Normal,,,,,PeeG2kH38EOlxO4Y84vfEA,5SwdBODqQxS/aBdHXgoqZg,,,N,0,0,,,2013-06-23 13:00,2013-06-23 13:00,admin,admin
97,85182,1346,11515,1473,1,0,N,N,N,CP_Phys,TT_Task,DT_FixedDrtn,RV_OK,TK_NotStart,A14240,Removal of Formwork for Abutment - Lift 2,2980,142,0,22,0,132,132,22,22,0,22,,,,2013-08-24 11:00,2013-08-26 13:00,,2013-07-31 09:00,2013-08-04 11:00,2013-07-31 09:00,2013-08-04 11:00,2013-07-31 09:00,2013-08-04 11:00,,2013-08-24 11:00,2013-08-26 13:00,,PT_Normal,,,,,xlFh2b3Sv02vJ2tXH0fTyw,fCrmGXFUT9GUB/aCRKBXaA,,,N,0,0,,,2013-06-23 13:00,2013-06-23 13:00,admin,admin
98,85183,1346,11515,1473,1,0,N,N,N,CP_Phys,TT_Task,DT_FixedDrtn,RV_OK,TK_NotStart,A14250,Removal of Formwork for Abutment - Breast Wall,2980,142,0,18,0,72,72,18,0,0,0,,,,2013-08-31 08:00,2013-09-01 16:00,,2013-08-06 16:00,2013-08-12 14:00,2013-08-06 16:00,2013-08-12 14:00,2013-08-06 16:00,2013-08-12 14:00,,2013-08-31 08:00,2013-09-01 16:00,,PT_Normal,,,,,h0fNV69z/kmaOr+99BPImQ,YX2iYSVORqWwZPM5lbe/Rw,,,N,0,0,,,2013-06-23 13:00,2013-06-23 13:00,admin,admin
99,85184,1346,11515,1473,1,0,N,N,N,CP_Phys,TT_Task,DT_FixedDrtn,RV_OK,TK_NotStart,A14260,Reinforcement Cutting & Bending for Abutment - Lift 1,2970,436,0,50,0,66.666668,66.666668,50,13.333332,0,13.333332,,,,2013-07-20 13:00,2013-07-27 13:00,,2013-05-20 07:00,2013-05-26 17:00,2013-05-20 07:00,2013-05-26 17:00,2013-05-20 07:00,2013-05-26 17:00,,2013-07-20 13:00,2013-07-27 13:00,,PT_Normal,,,,,JRBjJkc9Vk6IB3QL0ol9Sw,2ouB3ujWSpW6X3mNUQODiQ,,,N,0,0,,,2013-06-23 13:00,2013-06-23 13:00,admin,admin
100,85185,1346,11515,1473,1,0,N,N,N,CP_Phys,TT_Task,DT_FixedDrtn,RV_OK,TK_NotStart,A14270,Reinforcement Cutting & Bending for Abutment - Lift 2,2970,483,0,50,0,150,150,50,20,0,20,,,,2013-07-30 10:00,2013-08-06 10:00,,2013-05-25 07:00,2013-05-29 17:00,2013-05-25 07:00,2013-05-29 17:00,2013-05-25 07:00,2013-05-29 17:00,,2013-07-30 10:00,2013-08-06 10:00,,PT_Normal,,,,,zTPQXsHwWUyF0CUKj0duDg,iWcTQ5URT2qwf1HHcPn+yA,,,N,0,0,,,2013-06-23 13:00,2013-06-23 13:00,admin,admin
101,85186,1346,11515,1473,1,0,N,N,N,CP_Phys,TT_Task,DT_FixedDrtn,RV_OK,TK_NotStart,A14280,Erection of Scaffolding for Abutment - Breast Walls,2971,142,0,7,0,35,35,7,7,0,7,,,,2013-08-26 13:00,2013-08-27 10:00,,2013-08-04 11:00,2013-08-05 08:00,2013-08-04 11:00,2013-08-05 08:00,2013-08-04 11:00,2013-08-05 08:00,,2013-08-26 13:00,2013-08-27 10:00,,PT_Normal,,,,,HyyGTGxdI06FxEIo3CkCsw,699lVlG8R268G/ghhD961Q,,,N,0,0,,,2013-06-23 13:00,2013-06-23 13:00,admin,admin
102,85187,1346,11515,1473,1,0,N,N,N,CP_Phys,TT_Task,DT_FixedDrtn,RV_OK,TK_NotStart,A14290,Reinforcement Cutting & Bending for Abutment - Breast Walls,2970,483,341,150,0,180,180,150,60,0,60,,,,2013-08-04 10:00,2013-08-27 10:00,,2013-05-28 07:00,2013-06-17 17:00,2013-05-28 07:00,2013-06-17 17:00,2013-05-28 07:00,2013-06-17 17:00,,2013-08-04 10:00,2013-08-27 10:00,,PT_Normal,,,,,b+40vm9VoEeSHETCi4I4MQ,9FJvx611Rme1IsIKQMEqNw,,,N,0,0,,,2013-06-23 13:00,2013-06-23 13:00,admin,admin
103,85188,1346,11515,1473,1,0,N,N,N,CP_Phys,TT_Task,DT_FixedDrtn,RV_OK,TK_NotStart,A14300,Reinforcement Fixing for Abutment - Breast Walls,2969,142,0,9,0,72,72,9,9,0,9,,,,2013-08-27 10:00,2013-08-28 09:00,,2013-08-05 08:00,2013-08-05 17:00,2013-08-05 08:00,2013-08-05 17:00,2013-08-05 08:00,2013-08-05 17:00,,2013-08-27 10:00,2013-08-28 09:00,,PT_Normal,,,,,uUAuhifl7U+j2sT9TtQV2Q,vu/JPx1uRpOdIj6xZz/IYA,,,N,0,0,,,2013-06-23 13:00,2013-06-23 13:00,admin,admin
104,85189,1346,11515,1473,1,0,N,N,N,CP_Phys,TT_Task,DT_FixedDrtn,RV_OK,TK_NotStart,A14310,Setting Out for Abutment,2971,148,6,20,0,40,40,20,0,0,0,,,,2013-07-20 16:00,2013-07-22 16:00,,2013-06-30 08:00,2013-07-02 08:00,2013-06-30 08:00,2013-07-02 08:00,2013-06-30 08:00,2013-07-02 08:00,,2013-07-20 16:00,2013-07-22 16:00,,PT_Normal,,,,,DxgGMv2+1kGGeVjTr2Dgww,JqwEGbquRfK1O+mJxq6KXQ,,,N,0,0,,,2013-06-23 13:00,2013-06-23 13:00,admin,admin
105,85190,1346,11515,1473,1,0,N,N,N,CP_Phys,TT_Task,DT_FixedDrtn,RV_OK,TK_NotStart,A14320,Concreting for Breast Walls,2971,142,0,9,0,36,36,9,45,0,45,,,,2013-08-28 09:00,2013-08-31 08:00,,2013-08-06 07:00,2013-08-06 16:00,2013-08-06 07:00,2013-08-06 16:00,2013-08-06 07:00,2013-08-06 16:00,,2013-08-28 09:00,2013-08-31 08:00,,PT_Normal,,,,,cSHXMp8Eo06LF/4TMXQqvw,hLHCwtmUQuiS5xw+3TSBRg,,,N,0,0,,,2013-06-23 13:00,2013-06-23 13:00,admin,admin
106,85191,1346,11515,1473,1,0,N,N,N,CP_Phys,TT_Task,DT_FixedDrtn,RV_OK,TK_NotStart,A14330,Dismantling of Complete Abutment Scaffolding,2980,142,0,8,0,32,32,8,0,0,0,,,,2013-09-01 16:00,2013-09-02 14:00,,2013-08-12 14:00,2013-08-13 12:00,2013-08-12 14:00,2013-08-13 12:00,2013-08-12 14:00,2013-08-13 12:00,,2013-09-01 16:00,2013-09-02 14:00,,PT_Normal,,,,,Bwaljxqnj0m8VyYNixNRsQ,BjY+BU40QYa022SxWrXEvg,,,N,0,0,,,2013-06-23 13:00,2013-06-23 13:00,admin,admin
107,85192,1346,11515,1473,1,0,N,N,N,CP_Phys,TT_Task,DT_FixedDrtn,RV_OK,TK_NotStart,A14340,"Application of Primer, Water Proofing Membrane & Protection Board",2971,142,0,20,0,40,40,20,0,0,0,,,,2013-09-02 14:00,2013-09-04 14:00,,2013-08-13 12:00,2013-08-17 12:00,2013-08-13 12:00,2013-08-17 12:00,2013-08-13 12:00,2013-08-17 12:00,,2013-09-02 14:00,2013-09-04 14:00,,PT_Normal,,,,,hubegXCmtkSLX82LVvNaGQ,P5Sq3N2KSZO9hvs0ys4XRA,,,N,0,0,,,2013-06-23 13:00,2013-06-23 13:00,admin,admin
108,85193,1346,11515,1473,1,0,N,N,N,CP_Phys,TT_Task,DT_FixedDrtn,RV_OK,TK_NotStart,A14350,Application of Bitumen Mastic,2971,142,0,8,0,16,16,8,0,0,0,,,,2013-09-04 14:00,2013-09-07 12:00,,2013-08-17 12:00,2013-08-18 10:00,2013-08-17 12:00,2013-08-18 10:00,2013-08-17 12:00,2013-08-18 10:00,,2013-09-04 14:00,2013-09-07 12:00,,PT_Normal,,,,,jB7NWEnmt0m0jvyEXdTkJw,UeFvo7TLSE2bIVqwh16bmA,,,N,0,0,,,2013-06-23 13:00,2013-06-23 13:00,admin,admin
109,85194,1346,11515,1473,1,0,N,N,N,CP_Phys,TT_Task,DT_FixedDrtn,RV_OK,TK_NotStart,A14360,Concrete Screed for Balance Portion of PCC,2971,142,0,8,0,16,16,8,0,0,0,,,,2013-09-04 14:00,2013-09-07 12:00,,2013-08-17 12:00,2013-08-18 10:00,2013-08-17 12:00,2013-08-18 10:00,2013-08-17 12:00,2013-08-18 10:00,,2013-09-04 14:00,2013-09-07 12:00,,PT_Normal,,,,,ENR3YYRAyUmhvX1Xc7eg0Q,RheaplHRQ7WNXfro15rPSw,,,N,0,0,,,2013-06-23 13:00,2013-06-23 13:00,admin,admin
110,85195,1346,11515,1473,1,0,N,N,N,CP_Phys,TT_Task,DT_FixedDrtn,RV_OK,TK_NotStart,A14370,Completion of Abutment Construction  ABT - 2 EB,,142,142,8,0,0,0,8,0,0,0,,,,2013-09-04 14:00,2013-09-07 12:00,,2013-08-17 12:00,2013-08-18 10:00,2013-08-17 12:00,2013-08-18 10:00,2013-08-17 12:00,2013-08-18 10:00,,2013-09-04 14:00,2013-09-07 12:00,,PT_Normal,,,,,D8Oi6kwofUKB/XrLxSWYXA,aw+DuDCMS1W1yvH37MMHGQ,,,N,0,0,,,2013-06-23 13:00,2013-06-23 13:00,admin,admin
111,85196,1346,11523,1473,1,0,N,N,N,CP_Phys,TT_Task,DT_FixedDrtn,RV_OK,TK_NotStart,A10270,Erection of Scaffolding for Abutment - Lift 1,,142,0,27,0,296,296,27,16,0,16,,,,2013-06-08 15:00,2013-06-11 12:00,,2013-05-19 13:00,2013-05-22 10:00,2013-05-19 13:00,2013-05-22 10:00,2013-05-19 13:00,2013-05-22 10:00,,2013-06-08 15:00,2013-06-11 12:00,,PT_Normal,,,,,ngUqBzNP1UmNhe31kMhslg,NpYm9x/CQ9mD+H7Q7cJRuA,,,N,0,0,,,2013-06-23 13:00,2013-06-23 13:00,admin,admin
112,85197,1346,11523,1473,1,0,N,N,N,CP_Phys,TT_Task,DT_FixedDrtn,RV_OK,TK_NotStart,A10280,Reinforcement Fixing for Abutment - Lift 1,2971,142,0,45,0,363,363,45,24,0,24,,,,2013-06-11 12:00,2013-06-17 17:00,,2013-05-22 10:00,2013-05-28 15:00,2013-05-22 10:00,2013-05-28 15:00,2013-05-22 10:00,2013-05-28 15:00,,2013-06-11 12:00,2013-06-17 17:00,,PT_Normal,,,,,31M1fqYq3EeKzdlrXFby1w,Bafz/tQ2RDeDxev2MWRzhQ,,,N,0,0,,,2013-06-23 13:00,2013-06-23 13:00,admin,admin
113,85198,1346,11523,1473,1,0,N,N,N,CP_Phys,TT_Task,DT_FixedDrtn,RV_OK,TK_NotStart,A10290,Formwork for Abutment - Lift 1,2980,142,0,27,0,224,224,27,16,0,16,,,,2013-06-18 07:00,2013-06-22 14:00,,2013-05-28 15:00,2013-06-02 12:00,2013-05-28 15:00,2013-06-02 12:00,2013-05-28 15:00,2013-06-02 12:00,,2013-06-18 07:00,2013-06-22 14:00,,PT_Normal,,,,,Tt+POOgXckS2Gbb7w4Kflg,sNNJ9QadQw+SB+AWUx6QdQ,,,N,0,0,,,2013-06-23 13:00,2013-06-23 13:00,admin,admin
114,85199,1346,11523,1473,1,0,N,N,N,CP_Phys,TT_Task,DT_FixedDrtn,RV_OK,TK_NotStart,A10300,Concreting for Abutment - Lift 1,2969,142,0,8,0,56,56,8,56,0,56,,,,2013-06-22 14:00,2013-06-23 12:00,,2013-06-02 12:00,2013-06-03 10:00,2013-06-02 12:00,2013-06-03 10:00,2013-06-02 12:00,2013-06-03 10:00,,2013-06-22 14:00,2013-06-23 12:00,,PT_Normal,,,,,8g53nTUfCkiki1TbPG9hrw,3dSYOxG0Qg29KpRPOPHd6Q,,,N,0,0,,,2013-06-23 13:00,2013-06-23 13:00,admin,admin
115,85200,1346,11523,1473,1,0,N,N,N,CP_Phys,TT_Task,DT_FixedDrtn,RV_OK,TK_NotStart,A10310,Removal of Formwork for Abutment - Lift 1,2980,142,0,20,0,112,112,20,20,0,20,,,,2013-06-24 10:00,2013-06-26 10:00,,2013-06-04 08:00,2013-06-08 08:00,2013-06-04 08:00,2013-06-08 08:00,2013-06-04 08:00,2013-06-08 08:00,,2013-06-24 10:00,2013-06-26 10:00,,PT_Normal,,,,,MZb+S/rEXEeQQNfr5uHbKw,M5Uy18n3ROOkAD5V5WLDIA,,,N,0,0,,,2013-06-23 13:00,2013-06-23 13:00,admin,admin
116,85201,1346,11523,1473,1,0,N,N,N,CP_Phys,TT_Task,DT_FixedDrtn,RV_OK,TK_NotStart,A10320,Erection of Scaffolding for Abutment  - Lift 2,,142,0,18,0,160,160,18,16,0,16,,,,2013-06-26 10:00,2013-06-30 08:00,,2013-06-08 08:00,2013-06-09 16:00,2013-06-08 08:00,2013-06-09 16:00,2013-06-08 08:00,2013-06-09 16:00,,2013-06-26 10:00,2013-06-30 08:00,,PT_Normal,,,,,CIsPv+GSSEqZcDz0RjMs8w,uWr/5y7fS0m8N6VUeGlbXw,,,N,0,0,,,2013-06-23 13:00,2013-06-23 13:00,admin,admin
117,85202,1346,11523,1473,1,0,N,N,N,CP_Phys,TT_Task,DT_FixedDrtn,RV_OK,TK_NotStart,A10330,Reinforcement Fixing for Abutment - Lift 2,2971,142,0,18,0,162,162,18,18,0,18,,,,2013-06-30 08:00,2013-07-01 16:00,,2013-06-09 16:00,2013-06-11 14:00,2013-06-09 16:00,2013-06-11 14:00,2013-06-09 16:00,2013-06-11 14:00,,2013-06-30 08:00,2013-07-01 16:00,,PT_Normal,,,,,0GgfazuHAkSZ5bpC0ymfMw,vw8/fteWQzGnetHShV09cQ,,,N,0,0,,,2013-06-23 13:00,2013-06-23 13:00,admin,admin
118,85203,1346,11523,1473,1,0,N,N,N,CP_Phys,TT_Task,DT_FixedDrtn,RV_OK,TK_NotStart,A10340,Formwork for Abutment - Lift 2,2980,142,0,18,0,162,162,18,18,0,18,,,,2013-07-01 16:00,2013-07-03 14:00,,2013-06-11 14:00,2013-06-15 12:00,2013-06-11 14:00,2013-06-15 12:00,2013-06-11 14:00,2013-06-15 12:00,,2013-07-01 16:00,2013-07-03 14:00,,PT_Normal,,,,,Eq2De4514Ui5ZR6hzCNZoQ,5JcDG9dLQ8yY0UE9l58JzA,,,N,0,0,,,2013-06-23 13:00,2013-06-23 13:00,admin,admin
119,85204,1346,11523,1473,1,0,N,N,N,CP_Phys,TT_Task,DT_FixedDrtn,RV_OK,TK_NotStart,A10350,Concreting for Abutment - Lift 2,2969,142,0,8,0,56,56,8,56,0,56,,,,2013-07-03 14:00,2013-07-06 12:00,,2013-06-15 12:00,2013-06-16 10:00,2013-06-15 12:00,2013-06-16 10:00,2013-06-15 12:00,2013-06-16 10:00,,2013-07-03 14:00,2013-07-06 12:00,,PT_Normal,,,,,BMnjc7IHp0S2/vrl8kyi2Q,wM4Go+2tTKKyhEZlidyFaA,,,N,0,0,,,2013-06-23 13:00,2013-06-23 13:00,admin,admin
120,85205,1346,11523,1473,1,0,N,N,N,CP_Phys,TT_Task,DT_FixedDrtn,RV_OK,TK_NotStart,A10360,Removal of Formwork for Abutment - Lift 2,2980,142,0,22,0,132,132,22,22,0,22,,,,2013-07-07 10:00,2013-07-09 12:00,,2013-06-17 08:00,2013-06-19 10:00,2013-06-17 08:00,2013-06-19 10:00,2013-06-17 08:00,2013-06-19 10:00,,2013-07-07 10:00,2013-07-09 12:00,,PT_Normal,,,,,GETynpdp3UCqPQeCCOBl2A,5hQ4nZdYRxWLEG2TUpi/MA,,,N,0,0,,,2013-06-23 13:00,2013-06-23 13:00,admin,admin
121,85206,1346,11523,1473,1,0,N,N,N,CP_Phys,TT_Task,DT_FixedDrtn,RV_OK,TK_NotStart,A10370,Removal of Formwork for Abutment - Breast Wall,2980,160,0,18,0,72,72,18,0,0,0,,,,2013-07-15 15:00,2013-07-17 13:00,,2013-06-23 15:00,2013-06-25 13:00,2013-06-23 15:00,2013-06-25 13:00,2013-06-23 15:00,2013-06-25 13:00,,2013-07-15 15:00,2013-07-17 13:00,,PT_Normal,,,,,Azqf8DLUI06+UuCXQZ+bDw,8Lv7OskFQvGvR6jBLoQW5Q,,,N,0,0,,,2013-06-23 13:00,2013-06-23 13:00,admin,admin
122,85207,1346,11523,1473,1,0,N,N,N,CP_Phys,TT_Task,DT_FixedDrtn,RV_OK,TK_NotStart,A10380,Reinforcement Cutting & Bending for Abutment - Lift 1,2970,325,0,50,0,100.000001,100.000001,50,13.333332,0,13.333332,,,,2013-06-08 12:00,2013-06-15 12:00,,2013-04-23 07:00,2013-04-29 17:00,2013-04-23 07:00,2013-04-29 17:00,2013-04-23 07:00,2013-04-29 17:00,,2013-06-08 12:00,2013-06-15 12:00,,PT_Normal,,,,,EUR7ozLZkkS/YXhzULGD1g,BX3PEAEoSbeJEYfy8/+AkQ,,,N,0,0,,,2013-06-23 13:00,2013-06-23 13:00,admin,admin
123,85208,1346,11523,1473,1,0,N,N,N,CP_Phys,TT_Task,DT_FixedDrtn,RV_OK,TK_NotStart,A10390,Reinforcement Cutting & Bending for Abutment - Lift 2,2970,401,0,50,0,150,150,50,20,0,20,,,,2013-06-23 08:00,2013-06-30 08:00,,2013-04-28 07:00,2013-05-04 17:00,2013-04-28 07:00,2013-05-04 17:00,2013-04-28 07:00,2013-05-04 17:00,,2013-06-23 08:00,2013-06-30 08:00,,PT_Normal,,,,,zEfSN6dKpUGsG2eJ7bQO7Q,QABnLicDSVu+pmE9YwehzA,,,N,0,0,,,2013-06-23 13:00,2013-06-23 13:00,admin,admin
124,85209,1346,11523,1473,1,0,N,N,N,CP_Phys,TT_Task,DT_FixedDrtn,RV_OK,TK_NotStart,A10400,Erection of Scaffolding for Abutment - Breast Walls,2971,142,0,7,0,35,35,7,7,0,7,,,,2013-07-09 12:00,2013-07-10 09:00,,2013-06-19 10:00,2013-06-19 17:00,2013-06-19 10:00,2013-06-19 17:00,2013-06-19 10:00,2013-06-19 17:00,,2013-07-09 12:00,2013-07-10 09:00,,PT_Normal,,,,,KWt/b37PQUCDRXwKRIk1YQ,tfVWx0vXR6edgHxfe06cGg,,,N,0,0,,,2013-06-23 13:00,2013-06-23 13:00,admin,admin
125,85210,1346,11523,1473,1,0,N,N,N,CP_Phys,TT_Task,DT_FixedDrtn,RV_OK,TK_NotStart,A10410,Reinforcement Cutting & Bending for Abutment - Breast Walls,2970,452,0,50,0,60,60,50,20,0,20,,,,2013-07-03 09:00,2013-07-10 09:00,,2013-05-01 07:00,2013-05-07 17:00,2013-05-01 07:00,2013-05-07 17:00,2013-05-01 07:00,2013-05-07 17:00,,2013-07-03 09:00,2013-07-10 09:00,,PT_Normal,,,,,PkUlUzZYdkKFAv6rzA8/wQ,yHeC3gCRTQaN6wvM0pJgJA,,,N,0,0,,,2013-06-23 13:00,2013-06-23 13:00,admin,admin
126,85211,1346,11523,1473,1,0,N,N,N,CP_Phys,TT_Task,DT_FixedDrtn,RV_OK,TK_NotStart,A10420,Reinforcement Fixing for Abutment - Breast Walls,2969,142,0,9,0,72,72,9,9,0,9,,,,2013-07-10 09:00,2013-07-13 08:00,,2013-06-22 07:00,2013-06-22 16:00,2013-06-22 07:00,2013-06-22 16:00,2013-06-22 07:00,2013-06-22 16:00,,2013-07-10 09:00,2013-07-13 08:00,,PT_Normal,,,,,l9eWkvDyOEKzTk9guoVhzA,4k9gtZwPRi+2ZpxYytjoMg,,,N,0,0,,,2013-06-23 13:00,2013-06-23 13:00,admin,admin
127,85212,1346,11523,1473,1,0,N,N,N,CP_Phys,TT_Task,DT_FixedDrtn,RV_OK,TK_NotStart,A10430,Setting Out for Abutment,2971,142,0,9,0,18,18,9,0,0,0,,,,2013-06-05 16:00,2013-06-08 15:00,,2013-05-18 14:00,2013-05-19 13:00,2013-05-18 14:00,2013-05-19 13:00,2013-05-18 14:00,2013-05-19 13:00,,2013-06-05 16:00,2013-06-08 15:00,,PT_Normal,,,,,FettrC7Ly0ObtiRS6+EwXQ,Oxh1WouvTdyDkF1ih4C+Rw,,,N,0,0,,,2013-06-23 13:00,2013-06-23 13:00,admin,admin
128,85213,1346,11523,1473,1,0,N,N,N,CP_Phys,TT_Task,DT_FixedDrtn,RV_OK,TK_NotStart,A10440,Concreting for Breast Walls,2969,142,0,9,0,36,36,9,45,0,45,,,,2013-07-13 08:00,2013-07-13 17:00,,2013-06-22 16:00,2013-06-23 15:00,2013-06-22 16:00,2013-06-23 15:00,2013-06-22 16:00,2013-06-23 15:00,,2013-07-13 08:00,2013-07-13 17:00,,PT_Normal,,,,,+7gthgpt5EqS+w+auvPqsw,ZUrYexvpTViIBiIBrJwpng,,,N,0,0,,,2013-06-23 13:00,2013-06-23 13:00,admin,admin
129,85214,1346,11523,1473,1,0,N,N,N,CP_Phys,TT_Task,DT_FixedDrtn,RV_OK,TK_NotStart,A10450,Dismantling of Complete Abutment Scaffolding,2980,215,0,8,0,32,32,8,0,0,0,,,,2013-07-27 08:00,2013-07-27 16:00,,2013-06-25 13:00,2013-06-26 11:00,2013-06-25 13:00,2013-06-26 11:00,2013-06-25 13:00,2013-06-26 11:00,,2013-07-27 08:00,2013-07-27 16:00,,PT_Normal,,,,,hEBPJrVpiE6eU1VV4FrKJQ,oes2xPEaTcSxJx3QlRbNqQ,,,N,0,0,,,2013-06-23 13:00,2013-06-23 13:00,admin,admin
130,85215,1346,11523,1473,1,0,N,N,N,CP_Phys,TT_Task,DT_FixedDrtn,RV_OK,TK_NotStart,A10460,"Application of Primer, Water Proofing Membrane & Protection Board",2971,215,0,20,0,40,40,20,0,0,0,,,,2013-07-27 16:00,2013-07-29 16:00,,2013-06-26 11:00,2013-06-30 11:00,2013-06-26 11:00,2013-06-30 11:00,2013-06-26 11:00,2013-06-30 11:00,,2013-07-27 16:00,2013-07-29 16:00,,PT_Normal,,,,,DNugwh/D7E2zWCTuM0Yjaw,vzHxs7MJTdSdUOSPeiOhIA,,,N,0,0,,,2013-06-23 13:00,2013-06-23 13:00,admin,admin
131,85216,1346,11523,1473,1,0,N,N,N,CP_Phys,TT_Task,DT_FixedDrtn,RV_OK,TK_NotStart,A10470,Application of Bitumen Mastic,2971,215,0,8,0,16,16,8,0,0,0,,,,2013-07-29 16:00,2013-07-30 14:00,,2013-06-30 11:00,2013-07-01 09:00,2013-06-30 11:00,2013-07-01 09:00,2013-06-30 11:00,2013-07-01 09:00,,2013-07-29 16:00,2013-07-30 14:00,,PT_Normal,,,,,hhXucvmS7kifEst5DHhPSA,g0lQAFMAS2eU43kOke6KWA,,,N,0,0,,,2013-06-23 13:00,2013-06-23 13:00,admin,admin
132,85217,1346,11523,1473,1,0,N,N,N,CP_Phys,TT_Task,DT_FixedDrtn,RV_OK,TK_NotStart,A10480,Concrete Screed for Balance Portion of PCC,2971,215,0,8,0,16,16,8,0,0,0,,,,2013-07-29 16:00,2013-07-30 14:00,,2013-06-30 11:00,2013-07-01 09:00,2013-06-30 11:00,2013-07-01 09:00,2013-06-30 11:00,2013-07-01 09:00,,2013-07-29 16:00,2013-07-30 14:00,,PT_Normal,,,,,p1mmpj1LLUC/5ybRMssz9A,uBPnxzkrQ8KZjSgxRiNJPA,,,N,0,0,,,2013-06-23 13:00,2013-06-23 13:00,admin,admin
133,85218,1346,11523,1473,1,0,N,N,N,CP_Phys,TT_Task,DT_FixedDrtn,RV_OK,TK_NotStart,A10490,Completion of Abutment Construction  ABT - 1 WB,,215,103,8,0,0,0,8,0,0,0,,,,2013-07-29 16:00,2013-07-30 14:00,,2013-06-30 11:00,2013-07-01 09:00,2013-06-30 11:00,2013-07-01 09:00,2013-06-30 11:00,2013-07-01 09:00,,2013-07-29 16:00,2013-07-30 14:00,,PT_Normal,,,,,5QKGRg1hpU+YoXzl6u2QUg,FjdVH0+rRaC7HFwHkTgCQQ,,,N,0,0,,,2013-06-23 13:00,2013-06-23 13:00,admin,admin
134,85219,1346,11505,1473,0,0,N,N,N,CP_Phys,TT_FinMile,DT_FixedDrtn,RV_OK,TK_NotStart,A8240,Completion of West Bound & East Bound Bridges,,0,0,0,0,0,0,0,0,0,0,,,,2014-01-11 15:00,2014-01-11 15:00,,2014-01-11 15:00,2014-01-11 15:00,2014-01-11 15:00,2014-01-11 15:00,2014-01-11 15:00,2014-01-11 15:00,,2014-01-11 15:00,2014-01-11 15:00,,PT_Normal,,,,,qR5+c/xBgU2JN/RnRMYxNQ,,,,Y,0,0,,,2013-06-23 13:00,2013-06-23 13:00,admin,admin
135,85220,1346,11505,1473,1,0,N,N,N,CP_Phys,TT_Task,DT_FixedDrtn,RV_OK,TK_NotStart,A8239,Cleaning & Houskeeping Works,2971,0,0,41,0,4907.7,4907.7,41,1402.2,0,1402.2,,,,2014-01-11 15:00,2014-01-15 16:00,,2014-01-11 15:00,2014-01-15 16:00,2014-01-11 15:00,2014-01-15 16:00,2014-01-11 15:00,2014-01-15 16:00,,2014-01-11 15:00,2014-01-15 16:00,,PT_Normal,,,,,fpo1Q8N54ku/TAQNPZVXrg,,,,Y,0,0,,,2013-06-23 13:00,2013-06-23 13:00,admin,admin
136,85221,1346,11505,1473,1,0,N,N,N,CP_Phys,TT_Task,DT_FixedDrtn,RV_OK,TK_NotStart,A8238,Removal of Diversion at X,2984,0,0,41,0,98.4,98.4,41,98.4,0,98.4,,,,2014-01-11 15:00,2014-01-15 16:00,,2014-01-11 15:00,2014-01-15 16:00,2014-01-11 15:00,2014-01-15 16:00,2014-01-11 15:00,2014-01-15 16:00,,2014-01-11 15:00,2014-01-15 16:00,,PT_Normal,,,,,kvWR0UE2EUSVsL+wYKhwqQ,,,,Y,0,0,,,2015-02-14 13:06,2015-02-14 13:06,admin,admin
137,85222,1346,11501,1473,1,100,N,N,N,CP_Phys,TT_Task,DT_FixedDrtn,RV_OK,TK_Complete,A5,Prepare and Submit Method Statment for Bridge Works,,,,0,0,0,0,140,0,0,0,,2012-12-17 07:00,2013-01-05 17:00,2013-05-08 13:00,2013-05-08 13:00,,2013-04-23 00:00,2013-04-23 00:00,,,2012-12-17 07:00,2013-01-05 17:00,,,,,PT_Normal,,,,,1xNdPeWbM0C2JXKBwOtPkg,vO6vZUPj8UmtVTpSGS/0KA,,,N,0,0,,,2013-06-23 13:00,2013-06-23 13:00,admin,admin
138,85223,1346,11501,1473,1,100,N,N,N,CP_Phys,TT_Task,DT_FixedDrtn,RV_OK,TK_Complete,A6,Review and approval for Method Statment for Bridge Works,,,,0,0,0,0,140,0,0,0,,2013-01-06 07:00,2013-01-19 00:00,2013-05-08 13:00,2013-05-08 13:00,,2013-04-23 00:00,2013-04-23 00:00,,,2013-01-06 07:00,2013-01-23 17:00,,,,,PT_Normal,,,,,6Y+8lRnheUON1PLw+P7bpg,VJ6ELbX5BkOzJmrl6094Aw,,,N,0,0,,,2013-06-23 13:00,2013-06-23 13:00,admin,admin
139,85224,1346,11498,1473,1,100,N,N,N,CP_Phys,TT_Task,DT_FixedDrtn,RV_OK,TK_Complete,A16,Survey Works,,,,0,0,0,0,30,0,0,0,,2012-12-17 07:00,2012-12-23 12:00,2013-05-08 13:00,2013-05-08 13:00,,2013-04-23 00:00,2013-04-23 00:00,,,2012-12-17 07:00,2012-12-19 17:00,,,,,PT_Normal,,,,,rTiMPH9wjk+ZywE2DKI9IA,DuXGcx5YR26UXkUC4P91JQ,,,N,0,0,,,2013-06-23 13:00,2013-06-23 13:00,admin,admin
140,85225,1346,11524,1473,1,0,N,N,N,CP_Phys,TT_Task,DT_FixedDrtn,RV_OK,TK_NotStart,A242,Erection of Scaffolding for Pier - Lift 1,3002,0,0,9,0,67,67,9,8,0,8,,,,2013-07-28 10:00,2013-07-29 09:00,,2013-07-28 10:00,2013-07-29 09:00,2013-07-28 10:00,2013-07-29 09:00,2013-07-28 10:00,2013-07-29 09:00,,2013-07-28 10:00,2013-07-29 09:00,,PT_Normal,,,,,CU4maI2LOkiioW1Z9groxg,UqCPHLqtTlC7518tG2nrkQ,,,Y,0,0,,,2013-06-23 13:00,2013-06-23 13:00,admin,admin
141,85226,1346,11524,1473,1,0,N,N,N,CP_Phys,TT_Task,DT_FixedDrtn,RV_OK,TK_NotStart,A244,Reinforcement Fixing for Pier - Lift 1,2971,0,0,18,0,238,238,18,18,0,18,,,,2013-07-29 09:00,2013-07-30 17:00,,2013-07-29 09:00,2013-07-30 17:00,2013-07-29 09:00,2013-07-30 17:00,2013-07-29 09:00,2013-07-30 17:00,,2013-07-29 09:00,2013-07-30 17:00,,PT_Normal,,,,,R7xl9FOjykOH6rQf0rwkeQ,BdUpBfefTUC5Mrc+Vft3kg,,,Y,0,0,,,2013-06-23 13:00,2013-06-23 13:00,admin,admin
142,85227,1346,11524,1473,1,0,N,N,N,CP_Phys,TT_Task,DT_FixedDrtn,RV_OK,TK_NotStart,A248,Erection of Scaffolding for Pier - Lift 2,3002,0,0,9,0,87,87,9,8,0,8,,,,2013-08-03 15:00,2013-08-04 14:00,,2013-08-03 15:00,2013-08-04 14:00,2013-08-03 15:00,2013-08-04 14:00,2013-08-03 15:00,2013-08-04 14:00,,2013-08-03 15:00,2013-08-04 14:00,,PT_Normal,,,,,p/WrbTjbR0SGdKFO7q35yQ,CiDCirAcR0SbSOzmk2BHWA,,,Y,0,0,,,2013-06-23 13:00,2013-06-23 13:00,admin,admin
143,85228,1346,11524,1473,1,0,N,N,N,CP_Phys,TT_Task,DT_FixedDrtn,RV_OK,TK_NotStart,A249,Reinforcement Fixing for Pier - Lift 2,2971,0,0,18,0,240,240,18,20,0,20,,,,2013-08-04 14:00,2013-08-06 12:00,,2013-08-04 14:00,2013-08-06 12:00,2013-08-04 14:00,2013-08-06 12:00,2013-08-04 14:00,2013-08-06 12:00,,2013-08-04 14:00,2013-08-06 12:00,,PT_Normal,,,,,1R+b/tykXEOPY9o4qnHeyQ,8VpbQS5gT9uWhjLhTlFbsA,,,Y,0,0,,,2013-06-23 13:00,2013-06-23 13:00,admin,admin
144,85229,1346,11524,1473,1,0,N,N,N,CP_Phys,TT_Task,DT_FixedDrtn,RV_OK,TK_NotStart,A250,Formwork for Pier - Lift 2,2980,0,0,9,0,76,76,9,8,0,8,,,,2013-08-06 12:00,2013-08-07 11:00,,2013-08-06 12:00,2013-08-07 11:00,2013-08-06 12:00,2013-08-07 11:00,2013-08-06 12:00,2013-08-07 11:00,,2013-08-06 12:00,2013-08-07 11:00,,PT_Normal,,,,,oHuKwsg+x0+jY4L2DRNZPg,GEx863wjT52dZl+gCrbk+A,,,Y,0,0,,,2013-06-23 13:00,2013-06-23 13:00,admin,admin
145,85230,1346,11524,1473,1,0,N,N,N,CP_Phys,TT_Task,DT_FixedDrtn,RV_OK,TK_NotStart,A251,Concreting for Pier - Lift 2,2969,0,0,9,0,98,98,9,34,0,34,,,,2013-08-07 11:00,2013-08-12 10:00,,2013-08-07 11:00,2013-08-12 10:00,2013-08-07 11:00,2013-08-12 10:00,2013-08-07 11:00,2013-08-12 10:00,,2013-08-07 11:00,2013-08-12 10:00,,PT_Normal,,,,,6pPDO/Bql0Cw7MkwCT8RLw,lraKsjxlSVO/7DGTDfZgrA,,,Y,0,0,,,2013-06-23 13:00,2013-06-23 13:00,admin,admin
146,85231,1346,11524,1473,1,0,N,N,N,CP_Phys,TT_Task,DT_FixedDrtn,RV_OK,TK_NotStart,A252,Erection of Scaffolding for Pier - Lift 3,3002,18,0,9,0,106,106,9,8,0,8,,,,2013-08-14 08:00,2013-08-14 17:00,,2013-08-12 10:00,2013-08-13 09:00,2013-08-12 10:00,2013-08-13 09:00,2013-08-12 10:00,2013-08-13 09:00,,2013-08-14 08:00,2013-08-14 17:00,,PT_Normal,,,,,S6KRVcA38U+GXK8k89Nf1g,38m3hkkWSEirQxpTf9lC8A,,,N,0,0,,,2013-06-23 13:00,2013-06-23 13:00,admin,admin
147,85232,1346,11524,1473,1,0,N,N,N,CP_Phys,TT_Task,DT_FixedDrtn,RV_OK,TK_NotStart,A253,Reinforcement Fixing for Pier - Lift 3,2971,18,0,9,0,116,116,9,8,0,8,,,,2013-08-17 07:00,2013-08-17 16:00,,2013-08-13 09:00,2013-08-14 08:00,2013-08-13 09:00,2013-08-14 08:00,2013-08-13 09:00,2013-08-14 08:00,,2013-08-17 07:00,2013-08-17 16:00,,PT_Normal,,,,,CXsBDBDlFEiWvrW+FffNBA,ok2YMSz1SYC80LzMySFniw,,,N,0,0,,,2013-06-23 13:00,2013-06-23 13:00,admin,admin
148,85233,1346,11524,1473,1,0,N,N,N,CP_Phys,TT_Task,DT_FixedDrtn,RV_OK,TK_NotStart,A254,Formwork for Pier - Lift 3,2980,18,0,9,0,77,77,9,8,0,8,,,,2013-08-17 16:00,2013-08-18 15:00,,2013-08-14 08:00,2013-08-14 17:00,2013-08-14 08:00,2013-08-14 17:00,2013-08-14 08:00,2013-08-14 17:00,,2013-08-17 16:00,2013-08-18 15:00,,PT_Normal,,,,,k8FXucr9Bk+u0oaQJ/yWVw,zSzqM2AZRi+t9mL0bvNwJg,,,N,0,0,,,2013-06-23 13:00,2013-06-23 13:00,admin,admin
149,85234,1346,11524,1473,1,0,N,N,N,CP_Phys,TT_Task,DT_FixedDrtn,RV_OK,TK_NotStart,A255,Concreting for Pier - Lift 3,2969,18,0,9,0,98,98,9,44,0,44,,,,2013-08-18 15:00,2013-08-19 14:00,,2013-08-17 07:00,2013-08-17 16:00,2013-08-17 07:00,2013-08-17 16:00,2013-08-17 07:00,2013-08-17 16:00,,2013-08-18 15:00,2013-08-19 14:00,,PT_Normal,,,,,h2Z0A0akaEy3gup16wnEiA,id4lD35vTwmit4/sswvgLA,,,N,0,0,,,2013-06-23 13:00,2013-06-23 13:00,admin,admin
150,85235,1346,11524,1473,1,0,N,N,N,CP_Phys,TT_Task,DT_FixedDrtn,RV_OK,TK_NotStart,A241,Setting Out  for Pier,2971,0,0,9,0,29,29,9,9,0,9,,,,2013-07-27 11:00,2013-07-28 10:00,,2013-07-27 11:00,2013-07-28 10:00,2013-07-27 11:00,2013-07-28 10:00,2013-07-27 11:00,2013-07-28 10:00,,2013-07-27 11:00,2013-07-28 10:00,,PT_Normal,,,,,LXgWLCAlyUy6ylKRW/jnBQ,GvZ+nN6IS0GCHBcGR+gCOg,,,Y,0,0,,,2013-06-23 13:00,2013-06-23 13:00,admin,admin
151,85236,1346,11524,1473,1,0,N,N,N,CP_Phys,TT_Task,DT_FixedDrtn,RV_OK,TK_NotStart,A240,Reinforcement Cutting & Bending for Pier - Lift 1,2970,120,0,36,0,756,756,36,80,0,80,,,,2013-07-13 13:00,2013-07-17 09:00,,2013-06-25 13:00,2013-07-01 09:00,2013-06-25 13:00,2013-07-01 09:00,2013-06-25 13:00,2013-07-01 09:00,,2013-07-13 13:00,2013-07-17 09:00,,PT_Normal,,,,,q1fre5ztaUGbM/lY2vXr8Q,2rct6xwNT4KYU/NL/MK/Lw,,,N,0,0,,,2013-06-23 13:00,2013-06-23 13:00,admin,admin
152,85237,1346,11524,1473,1,0,N,N,N,CP_Phys,TT_Task,DT_FixedDrtn,RV_OK,TK_NotStart,A243,Reinforcement Cutting & Bending for Pier - Lift 2,2970,120,0,36,0,756,756,36,80,0,80,,,,2013-07-15 13:00,2013-07-21 09:00,,2013-06-29 13:00,2013-07-03 09:00,2013-06-29 13:00,2013-07-03 09:00,2013-06-29 13:00,2013-07-03 09:00,,2013-07-15 13:00,2013-07-21 09:00,,PT_Normal,,,,,fbZE7YUpQUyqm3COphSP7g,alUm4DobT1ehqcIwFe9yfA,,,N,0,0,,,2013-06-23 13:00,2013-06-23 13:00,admin,admin
153,85238,1346,11524,1473,1,0,N,N,N,CP_Phys,TT_Task,DT_FixedDrtn,RV_OK,TK_NotStart,A247,Reinforcement Cutting & Bending for Pier - Lift 3,2970,120,0,36,0,720,720,36,80,0,80,,,,2013-07-17 13:00,2013-07-23 09:00,,2013-07-01 13:00,2013-07-07 09:00,2013-07-01 13:00,2013-07-07 09:00,2013-07-01 13:00,2013-07-07 09:00,,2013-07-17 13:00,2013-07-23 09:00,,PT_Normal,,,,,t+EHw7IEFUeUbcZzoWJtMg,TebnZjqGTyCRqXsvlp0kOA,,,N,0,0,,,2013-06-23 13:00,2013-06-23 13:00,admin,admin
154,85239,1346,11524,1473,1,0,N,N,N,CP_Phys,TT_Task,DT_FixedDrtn,RV_OK,TK_NotStart,A256,Removal of Formwork for Pier,2980,18,0,18,0,160,160,18,20,0,20,,,,2013-08-19 14:00,2013-08-21 12:00,,2013-08-17 16:00,2013-08-19 14:00,2013-08-17 16:00,2013-08-19 14:00,2013-08-17 16:00,2013-08-19 14:00,,2013-08-19 14:00,2013-08-21 12:00,,PT_Normal,,,,,h7q9tPPKg0+Nye7IE+n5dg,pEqAGfFWS6iRmDENctfJWQ,,,N,0,0,,,2013-06-23 13:00,2013-06-23 13:00,admin,admin
155,85240,1346,11524,1473,1,0,N,N,N,CP_Phys,TT_Task,DT_FixedDrtn,RV_OK,TK_NotStart,A257,Dismantling of Complete Pier Scaffolding,2984,19,19,80,0,871.111112,871.111112,80,0,0,0,,,,2013-08-21 13:00,2013-09-02 13:00,,2013-08-19 14:00,2013-08-31 14:00,2013-08-19 14:00,2013-08-31 14:00,2013-08-19 14:00,2013-08-31 14:00,,2013-08-21 13:00,2013-09-02 13:00,,PT_Normal,,,,,fzMMSe+gwUC+S1Tgu2Z/lw,1ZS98rYARbC4OkuKis0gcw,,,N,0,0,,,2013-06-23 13:00,2013-06-23 13:00,admin,admin
156,85241,1346,11524,1473,1,0,N,N,N,CP_Phys,TT_Task,DT_FixedDrtn,RV_OK,TK_NotStart,A258,"Application of Primer, Water Proofing Membrane & Protection Board",2971,0,0,20,0,80,80,20,0,0,0,,,,2013-09-02 13:00,2013-09-04 13:00,,2013-09-02 13:00,2013-09-04 13:00,2013-09-02 13:00,2013-09-04 13:00,2013-09-02 13:00,2013-09-04 13:00,,2013-09-02 13:00,2013-09-04 13:00,,PT_Normal,,,,,sWJ51sQ9vECZ3Y2+cNDFcw,vXVZJPskSiGX+JrjLoJhkw,,,Y,0,0,,,2013-06-23 13:00,2013-06-23 13:00,admin,admin
157,85242,1346,11524,1473,1,0,N,N,N,CP_Phys,TT_Task,DT_FixedDrtn,RV_OK,TK_NotStart,A259,Application of Bitumen Mastic,2971,0,0,9,0,29,29,9,0,0,0,,,,2013-09-04 13:00,2013-09-07 12:00,,2013-09-04 13:00,2013-09-07 12:00,2013-09-04 13:00,2013-09-07 12:00,2013-09-04 13:00,2013-09-07 12:00,,2013-09-04 13:00,2013-09-07 12:00,,PT_Normal,,,,,CzbzY2HDakyQrW1KQjQ9CQ,tpy/9W7WSmaEwqEiJR2cHQ,,,Y,0,0,,,2013-06-23 13:00,2013-06-23 13:00,admin,admin
158,85243,1346,11524,1473,1,0,N,N,N,CP_Phys,TT_Task,DT_FixedDrtn,RV_OK,TK_NotStart,A260,Concrete Screed for Balance Portion of PCC,2971,0,0,9,0,29,29,9,0,0,0,,,,2013-09-04 13:00,2013-09-07 12:00,,2013-09-04 13:00,2013-09-07 12:00,2013-09-04 13:00,2013-09-07 12:00,2013-09-04 13:00,2013-09-07 12:00,,2013-09-04 13:00,2013-09-07 12:00,,PT_Normal,,,,,xT40Sp36ZUisVmP1ICa/Jw,8dnTfXdnTEionfUpUYiq8w,,,Y,0,0,,,2013-06-23 13:00,2013-06-23 13:00,admin,admin
159,85244,1346,11524,1473,1,0,N,N,N,CP_Phys,TT_Task,DT_FixedDrtn,RV_OK,TK_NotStart,A11200,Completion of Pier Construction 2 - EB - A,,0,0,8,0,0,0,8,0,0,0,,,,2013-09-04 14:00,2013-09-07 12:00,,2013-09-04 14:00,2013-09-07 12:00,2013-09-04 14:00,2013-09-07 12:00,2013-09-04 14:00,2013-09-07 12:00,,2013-09-04 14:00,2013-09-07 12:00,,PT_Normal,,,,,TkcgYNu+1E6JFrN5UBI3wg,1XUwph2QR+yT2PEpwjcBCg,,,Y,0,0,,,2013-06-23 13:00,2013-06-23 13:00,admin,admin
160,85245,1346,11524,1473,1,0,N,N,N,CP_Phys,TT_Task,DT_FixedDrtn,RV_OK,TK_NotStart,A246,Concreting for Pier - Lift 1,2969,0,0,9,0,98,98,9,34,0,34,,,,2013-07-31 16:00,2013-08-03 15:00,,2013-07-31 16:00,2013-08-03 15:00,2013-07-31 16:00,2013-08-03 15:00,2013-07-31 16:00,2013-08-03 15:00,,2013-07-31 16:00,2013-08-03 15:00,,PT_Normal,,,,,diJlxM+oBEi6lQ5X1B60xQ,4RfArCrjSjiTfxGXe1zYbA,,,Y,0,0,,,2013-06-23 13:00,2013-06-23 13:00,admin,admin
161,85246,1346,11524,1473,1,0,N,N,N,CP_Phys,TT_Task,DT_FixedDrtn,RV_OK,TK_NotStart,A245,Formwork for Pier - Lift 1,2980,0,0,9,0,77,77,9,8,0,8,,,,2013-07-31 07:00,2013-07-31 16:00,,2013-07-31 07:00,2013-07-31 16:00,2013-07-31 07:00,2013-07-31 16:00,2013-07-31 07:00,2013-07-31 16:00,,2013-07-31 07:00,2013-07-31 16:00,,PT_Normal,,,,,z2I/oyqokkKSmz5EJFwopQ,jrITVSOdRMCsAy7xlDL3AA,,,Y,0,0,,,2013-06-23 13:00,2013-06-23 13:00,admin,admin
162,85247,1346,11516,1473,1,0,N,N,N,CP_Phys,TT_Task,DT_FixedDrtn,RV_OK,TK_NotStart,A221,Erection of Scaffolding for Pier - Lift 1,,0,0,9,0,48,48,9,8,0,8,,,,2013-07-15 10:00,2013-07-16 09:00,,2013-07-15 10:00,2013-07-16 09:00,2013-07-15 10:00,2013-07-16 09:00,2013-07-15 10:00,2013-07-16 09:00,,2013-07-15 10:00,2013-07-16 09:00,,PT_Normal,,,,,kez7llv3R0a7mT5sxGyqKQ,X4d3CoUEQwyqve/INmnQug,,,Y,0,0,,,2013-06-23 13:00,2013-06-23 13:00,admin,admin
163,85248,1346,11516,1473,1,0,N,N,N,CP_Phys,TT_Task,DT_FixedDrtn,RV_OK,TK_NotStart,A222,Reinforcement Fixing for Pier - Lift 1,2971,0,0,18,0,236,236,18,18,0,18,,,,2013-07-16 09:00,2013-07-17 17:00,,2013-07-16 09:00,2013-07-17 17:00,2013-07-16 09:00,2013-07-17 17:00,2013-07-16 09:00,2013-07-17 17:00,,2013-07-16 09:00,2013-07-17 17:00,,PT_Normal,,,,,pgI2viTCNEmQ7YH6GJOeug,Mhi6pP1UQ1qDjeJVHjSebg,,,Y,0,0,,,2013-06-23 13:00,2013-06-23 13:00,admin,admin
164,85249,1346,11516,1473,1,0,N,N,N,CP_Phys,TT_Task,DT_FixedDrtn,RV_OK,TK_NotStart,A226,Erection of Scaffolding for Pier - Lift 2,3002,0,0,9,0,84,84,9,8,0,8,,,,2013-07-21 15:00,2013-07-22 14:00,,2013-07-21 15:00,2013-07-22 14:00,2013-07-21 15:00,2013-07-22 14:00,2013-07-21 15:00,2013-07-22 14:00,,2013-07-21 15:00,2013-07-22 14:00,,PT_Normal,,,,,ob9cfUbxxEWe93np0lKcsg,I18daO0eSP+alIRcS/fR0Q,,,Y,0,0,,,2013-06-23 13:00,2013-06-23 13:00,admin,admin
165,85250,1346,11516,1473,1,0,N,N,N,CP_Phys,TT_Task,DT_FixedDrtn,RV_OK,TK_NotStart,A227,Reinforcement Fixing for Pier - Lift 2,2971,0,0,18,0,254,254,18,27,0,27,,,,2013-07-22 14:00,2013-07-24 12:00,,2013-07-22 14:00,2013-07-24 12:00,2013-07-22 14:00,2013-07-24 12:00,2013-07-22 14:00,2013-07-24 12:00,,2013-07-22 14:00,2013-07-24 12:00,,PT_Normal,,,,,0hyQIp/CsESDz8tmAvPq4Q,jDuzYxypTG2zZjNhxOVHFw,,,Y,0,0,,,2013-06-23 13:00,2013-06-23 13:00,admin,admin
166,85251,1346,11516,1473,1,0,N,N,N,CP_Phys,TT_Task,DT_FixedDrtn,RV_OK,TK_NotStart,A228,Formwork for Pier - Lift 2,2980,0,0,9,0,77,77,9,8,0,8,,,,2013-07-24 12:00,2013-07-27 11:00,,2013-07-24 12:00,2013-07-27 11:00,2013-07-24 12:00,2013-07-27 11:00,2013-07-24 12:00,2013-07-27 11:00,,2013-07-24 12:00,2013-07-27 11:00,,PT_Normal,,,,,28eoZMjKjEyjZyDmIjWxeg,t0mzfqz8ST+MLw588M6MHA,,,Y,0,0,,,2013-06-23 13:00,2013-06-23 13:00,admin,admin
167,85252,1346,11516,1473,1,0,N,N,N,CP_Phys,TT_Task,DT_FixedDrtn,RV_OK,TK_NotStart,A229,Concreting for Pier - Lift 2,2969,0,0,9,0,96,96,9,42,0,42,,,,2013-07-27 11:00,2013-07-28 10:00,,2013-07-27 11:00,2013-07-28 10:00,2013-07-27 11:00,2013-07-28 10:00,2013-07-27 11:00,2013-07-28 10:00,,2013-07-27 11:00,2013-07-28 10:00,,PT_Normal,,,,,H3dWcNoDRUGCAmD1AIpfLw,oaaIHMxvRYO1ToAriks6Mw,,,Y,0,0,,,2013-06-23 13:00,2013-06-23 13:00,admin,admin
168,85253,1346,11516,1473,1,0,N,N,N,CP_Phys,TT_Task,DT_FixedDrtn,RV_OK,TK_NotStart,A230,Erection of Scaffolding for Pier - Lift 3,3002,18,0,9,0,105,105,9,8,0,8,,,,2013-07-30 08:00,2013-07-30 17:00,,2013-07-28 10:00,2013-07-29 09:00,2013-07-28 10:00,2013-07-29 09:00,2013-07-28 10:00,2013-07-29 09:00,,2013-07-30 08:00,2013-07-30 17:00,,PT_Normal,,,,,QKuMaq0MOEuYnBb9sU07yg,SCpFUkmmRUuQpzDlOHXBNg,,,N,0,0,,,2013-06-23 13:00,2013-06-23 13:00,admin,admin
169,85254,1346,11516,1473,1,0,N,N,N,CP_Phys,TT_Task,DT_FixedDrtn,RV_OK,TK_NotStart,A231,Reinforcement Fixing for Pier - Lift 3,2971,18,0,9,0,116,116,9,8,0,8,,,,2013-07-31 07:00,2013-07-31 16:00,,2013-07-29 09:00,2013-07-30 08:00,2013-07-29 09:00,2013-07-30 08:00,2013-07-29 09:00,2013-07-30 08:00,,2013-07-31 07:00,2013-07-31 16:00,,PT_Normal,,,,,3fGVvetduU6ZMKU9w/vIfA,SwYKqR/nTV+XrvuOcuOU9g,,,N,0,0,,,2013-06-23 13:00,2013-06-23 13:00,admin,admin
170,85255,1346,11516,1473,1,0,N,N,N,CP_Phys,TT_Task,DT_FixedDrtn,RV_OK,TK_NotStart,A232,Formwork for Pier - Lift 3,2980,18,0,9,0,77,77,9,8,0,8,,,,2013-07-31 16:00,2013-08-03 15:00,,2013-07-30 08:00,2013-07-30 17:00,2013-07-30 08:00,2013-07-30 17:00,2013-07-30 08:00,2013-07-30 17:00,,2013-07-31 16:00,2013-08-03 15:00,,PT_Normal,,,,,duQv0vrAt0GKS2OEMQLniA,nwFgJopqRwmbu87f4PNC6g,,,N,0,0,,,2013-06-23 13:00,2013-06-23 13:00,admin,admin
171,85256,1346,11516,1473,1,0,N,N,N,CP_Phys,TT_Task,DT_FixedDrtn,RV_OK,TK_NotStart,A233,Concreting for Pier - Lift 3,2969,18,0,9,0,98,98,9,44,0,44,,,,2013-08-03 15:00,2013-08-04 14:00,,2013-07-31 07:00,2013-07-31 16:00,2013-07-31 07:00,2013-07-31 16:00,2013-07-31 07:00,2013-07-31 16:00,,2013-08-03 15:00,2013-08-04 14:00,,PT_Normal,,,,,dFeCxXbMGk6m2vsqTF58uA,K9vYO2H0RbG8Db7kGdeKxQ,,,N,0,0,,,2013-06-23 13:00,2013-06-23 13:00,admin,admin
172,85257,1346,11516,1473,1,0,N,N,N,CP_Phys,TT_Task,DT_FixedDrtn,RV_OK,TK_NotStart,A220,Setting Out  for Pier,2971,0,0,9,0,27,27,9,9,0,9,,,,2013-07-14 11:00,2013-07-15 10:00,,2013-07-14 11:00,2013-07-15 10:00,2013-07-14 11:00,2013-07-15 10:00,2013-07-14 11:00,2013-07-15 10:00,,2013-07-14 11:00,2013-07-15 10:00,,PT_Normal,,,,,8Vim6wQHs0uL80A47yVjOg,By3kMlHqRKiOVaTyvTziFg,,,Y,0,0,,,2013-06-23 13:00,2013-06-23 13:00,admin,admin
173,85258,1346,11516,1473,1,0,N,N,N,CP_Phys,TT_Task,DT_FixedDrtn,RV_OK,TK_NotStart,A218,Reinforcement Cutting & Bending for Pier - Lift 1,2970,120,0,36,0,756,756,36,36,0,36,,,,2013-07-02 07:00,2013-07-07 13:00,,2013-06-16 07:00,2013-06-19 13:00,2013-06-16 07:00,2013-06-19 13:00,2013-06-16 07:00,2013-06-19 13:00,,2013-07-02 07:00,2013-07-07 13:00,,PT_Normal,,,,,H9ibzQvbUEmmO/aySDHClg,Hm5axmOiRNaa2Qo1ttskvw,,,N,0,0,,,2013-06-23 13:00,2013-06-23 13:00,admin,admin
174,85259,1346,11516,1473,1,0,N,N,N,CP_Phys,TT_Task,DT_FixedDrtn,RV_OK,TK_NotStart,A219,Reinforcement Cutting & Bending for Pier - Lift 2,2970,120,0,36,0,720,720,36,36,0,36,,,,2013-07-06 07:00,2013-07-09 13:00,,2013-06-18 07:00,2013-06-23 13:00,2013-06-18 07:00,2013-06-23 13:00,2013-06-18 07:00,2013-06-23 13:00,,2013-07-06 07:00,2013-07-09 13:00,,PT_Normal,,,,,nRzeJRXmBUqYEyZwUQ6waQ,+3bmPBQbRB+uF5OsCQITEw,,,N,0,0,,,2013-06-23 13:00,2013-06-23 13:00,admin,admin
175,85260,1346,11516,1473,1,0,N,N,N,CP_Phys,TT_Task,DT_FixedDrtn,RV_OK,TK_NotStart,A223,Reinforcement Cutting & Bending for Pier - Lift 3,2970,120,0,36,0,756,756,36,36,0,36,,,,2013-07-08 07:00,2013-07-13 13:00,,2013-06-22 07:00,2013-06-25 13:00,2013-06-22 07:00,2013-06-25 13:00,2013-06-22 07:00,2013-06-25 13:00,,2013-07-08 07:00,2013-07-13 13:00,,PT_Normal,,,,,2L9c8yrL+0Orn23J7Rf2iw,psVODbxfTuCBCc/saQd/VQ,,,N,0,0,,,2013-06-23 13:00,2013-06-23 13:00,admin,admin
176,85261,1346,11516,1473,1,0,N,N,N,CP_Phys,TT_Task,DT_FixedDrtn,RV_OK,TK_NotStart,A234,Removal of Formwork for Pier,2980,18,0,18,0,160,160,18,20,0,20,,,,2013-08-04 14:00,2013-08-06 12:00,,2013-07-31 16:00,2013-08-04 14:00,2013-07-31 16:00,2013-08-04 14:00,2013-07-31 16:00,2013-08-04 14:00,,2013-08-04 14:00,2013-08-06 12:00,,PT_Normal,,,,,iE4qUHdnlEitHTuE3Iw/0Q,yqnbwVAQRS+4NgQAuZL+yA,,,N,0,0,,,2013-06-23 13:00,2013-06-23 13:00,admin,admin
177,85262,1346,11516,1473,1,0,N,N,N,CP_Phys,TT_Task,DT_FixedDrtn,RV_OK,TK_NotStart,A235,Dismantling of Complete Pier Scaffolding,,120,0,9,0,98,98,9,9,0,9,,,,2013-08-24 14:00,2013-08-25 13:00,,2013-08-04 14:00,2013-08-05 13:00,2013-08-04 14:00,2013-08-05 13:00,2013-08-04 14:00,2013-08-05 13:00,,2013-08-24 14:00,2013-08-25 13:00,,PT_Normal,,,,,qwudyetphUWz0JWr8Ylo/A,cf6oaVKORvaGc5VjosdL7Q,,,N,0,0,,,2013-06-23 13:00,2013-06-23 13:00,admin,admin
178,85263,1346,11516,1473,1,0,N,N,N,CP_Phys,TT_Task,DT_FixedDrtn,RV_OK,TK_NotStart,A236,"Application of Primer, Water Proofing Membrane & Protection Board",2971,120,0,20,0,60,60,20,0,0,0,,,,2013-08-25 13:00,2013-08-27 13:00,,2013-08-05 13:00,2013-08-07 13:00,2013-08-05 13:00,2013-08-07 13:00,2013-08-05 13:00,2013-08-07 13:00,,2013-08-25 13:00,2013-08-27 13:00,,PT_Normal,,,,,LCSo8kpujUaf6cGMB6C1ug,B1OLrEDzSNqJ0ZbXeXsFMQ,,,N,0,0,,,2013-06-23 13:00,2013-06-23 13:00,admin,admin
179,85264,1346,11516,1473,1,0,N,N,N,CP_Phys,TT_Task,DT_FixedDrtn,RV_OK,TK_NotStart,A237,Application of Bitumen Mastic,2971,120,0,9,0,27,27,9,0,0,0,,,,2013-08-27 13:00,2013-08-28 12:00,,2013-08-07 13:00,2013-08-12 12:00,2013-08-07 13:00,2013-08-12 12:00,2013-08-07 13:00,2013-08-12 12:00,,2013-08-27 13:00,2013-08-28 12:00,,PT_Normal,,,,,71BjeTYh3U+VvIxTabdNBw,o1xMVpQGRWqGsOH+dZWocA,,,N,0,0,,,2013-06-23 13:00,2013-06-23 13:00,admin,admin
180,85265,1346,11516,1473,1,0,N,N,N,CP_Phys,TT_Task,DT_FixedDrtn,RV_OK,TK_NotStart,A238,Concrete Screed for Balance Portion of PCC,2971,120,0,9,0,27,27,9,0,0,0,,,,2013-08-27 13:00,2013-08-28 12:00,,2013-08-07 13:00,2013-08-12 12:00,2013-08-07 13:00,2013-08-12 12:00,2013-08-07 13:00,2013-08-12 12:00,,2013-08-27 13:00,2013-08-28 12:00,,PT_Normal,,,,,hDfhpDe3rk2y+wvyZ5aMjA,41FFHNZzSFaIHOhtvj3tSQ,,,N,0,0,,,2013-06-23 13:00,2013-06-23 13:00,admin,admin
181,85266,1346,11516,1473,1,0,N,N,N,CP_Phys,TT_Task,DT_FixedDrtn,RV_OK,TK_NotStart,A239,Completion of Pier Construction 1 - EB - B,,120,0,8,0,0,0,8,0,0,0,,,,2013-08-27 14:00,2013-08-28 12:00,,2013-08-07 14:00,2013-08-12 12:00,2013-08-07 14:00,2013-08-12 12:00,2013-08-07 14:00,2013-08-12 12:00,,2013-08-27 14:00,2013-08-28 12:00,,PT_Normal,,,,,Z5wUk6p4P0O4tqL8VC92dA,+SDfOFTISb+wkW10LORT+A,,,N,0,0,,,2013-06-23 13:00,2013-06-23 13:00,admin,admin
182,85267,1346,11516,1473,1,0,N,N,N,CP_Phys,TT_Task,DT_FixedDrtn,RV_OK,TK_NotStart,A225,Concreting for Pier - Lift 1,2969,0,0,9,0,96,96,9,42,0,42,,,,2013-07-20 16:00,2013-07-21 15:00,,2013-07-20 16:00,2013-07-21 15:00,2013-07-20 16:00,2013-07-21 15:00,2013-07-20 16:00,2013-07-21 15:00,,2013-07-20 16:00,2013-07-21 15:00,,PT_Normal,,,,,BbBhKcTw+U2i/M7Rspe9ig,jgt3pB5TTliiuOk1NONCPg,,,Y,0,0,,,2013-06-23 13:00,2013-06-23 13:00,admin,admin
183,85268,1346,11516,1473,1,0,N,N,N,CP_Phys,TT_Task,DT_FixedDrtn,RV_OK,TK_NotStart,A224,Formwork for Pier - Lift 1,2980,0,0,9,0,76,76,9,8,0,8,,,,2013-07-20 07:00,2013-07-20 16:00,,2013-07-20 07:00,2013-07-20 16:00,2013-07-20 07:00,2013-07-20 16:00,2013-07-20 07:00,2013-07-20 16:00,,2013-07-20 07:00,2013-07-20 16:00,,PT_Normal,,,,,Ej3HadLO0EmAkmlPNfoIpg,hNn7WGEcRWywl68D9Dib3g,,,Y,0,0,,,2013-06-23 13:00,2013-06-23 13:00,admin,admin
184,85269,1346,11525,1473,1,0,N,N,N,CP_Phys,TT_Task,DT_FixedDrtn,RV_OK,TK_NotStart,A11230,Erection of Scaffolding for Pier - Lift 1,3002,0,0,9,0,67,67,9,8,0,8,,,,2013-08-12 10:00,2013-08-13 09:00,,2013-08-12 10:00,2013-08-13 09:00,2013-08-12 10:00,2013-08-13 09:00,2013-08-12 10:00,2013-08-13 09:00,,2013-08-12 10:00,2013-08-13 09:00,,PT_Normal,,,,,yqgX/ke9okiCBXartr3BQw,xaTA/dybTpyYhY5b/hN2tw,,,Y,0,0,,,2013-06-23 13:00,2013-06-23 13:00,admin,admin
185,85270,1346,11525,1473,1,0,N,N,N,CP_Phys,TT_Task,DT_FixedDrtn,RV_OK,TK_NotStart,A11240,Reinforcement Fixing for Pier - Lift 1,2971,0,0,18,0,238,238,18,18,0,18,,,,2013-08-13 09:00,2013-08-14 17:00,,2013-08-13 09:00,2013-08-14 17:00,2013-08-13 09:00,2013-08-14 17:00,2013-08-13 09:00,2013-08-14 17:00,,2013-08-13 09:00,2013-08-14 17:00,,PT_Normal,,,,,KmsP82UbIU6m+TKUJ84qYA,DQovf4fhT/WgJp1aXFlSsA,,,Y,0,0,,,2013-06-23 13:00,2013-06-23 13:00,admin,admin
186,85271,1346,11525,1473,1,0,N,N,N,CP_Phys,TT_Task,DT_FixedDrtn,RV_OK,TK_NotStart,A11250,Erection of Scaffolding for Pier - Lift 2,3002,0,0,9,0,85,85,9,8,0,8,,,,2013-08-18 15:00,2013-08-19 14:00,,2013-08-18 15:00,2013-08-19 14:00,2013-08-18 15:00,2013-08-19 14:00,2013-08-18 15:00,2013-08-19 14:00,,2013-08-18 15:00,2013-08-19 14:00,,PT_Normal,,,,,orY3+3lZ+UOQWarZajBGZQ,GgEU/aQBRVmgaZItk942lA,,,Y,0,0,,,2013-06-23 13:00,2013-06-23 13:00,admin,admin
187,85272,1346,11525,1473,1,0,N,N,N,CP_Phys,TT_Task,DT_FixedDrtn,RV_OK,TK_NotStart,A11260,Reinforcement Fixing for Pier - Lift 2,2971,0,0,18,0,240,240,18,20,0,20,,,,2013-08-19 14:00,2013-08-21 12:00,,2013-08-19 14:00,2013-08-21 12:00,2013-08-19 14:00,2013-08-21 12:00,2013-08-19 14:00,2013-08-21 12:00,,2013-08-19 14:00,2013-08-21 12:00,,PT_Normal,,,,,HowmUFU5r0SiHseqg6iBdQ,qHUV85nmR6m0Il/7QpQ3WA,,,Y,0,0,,,2013-06-23 13:00,2013-06-23 13:00,admin,admin
188,85273,1346,11525,1473,1,0,N,N,N,CP_Phys,TT_Task,DT_FixedDrtn,RV_OK,TK_NotStart,A11270,Formwork for Pier - Lift 2,2980,0,0,9,0,77,77,9,8,0,8,,,,2013-08-21 12:00,2013-08-24 11:00,,2013-08-21 12:00,2013-08-24 11:00,2013-08-21 12:00,2013-08-24 11:00,2013-08-21 12:00,2013-08-24 11:00,,2013-08-21 12:00,2013-08-24 11:00,,PT_Normal,,,,,Frv8/HCEkEKOknW+sQ+QsA,KkMm98IPRWyyoEp7orqpJw,,,Y,0,0,,,2013-06-23 13:00,2013-06-23 13:00,admin,admin
189,85274,1346,11525,1473,1,0,N,N,N,CP_Phys,TT_Task,DT_FixedDrtn,RV_OK,TK_NotStart,A11280,Concreting for Pier - Lift 2,2969,0,0,9,0,98,98,9,44,0,44,,,,2013-08-24 11:00,2013-08-25 10:00,,2013-08-24 11:00,2013-08-25 10:00,2013-08-24 11:00,2013-08-25 10:00,2013-08-24 11:00,2013-08-25 10:00,,2013-08-24 11:00,2013-08-25 10:00,,PT_Normal,,,,,GXTgpPzN4kGag7Q8VfdEGg,F8Yex+zfQ/Oc7mSO4zy7WA,,,Y,0,0,,,2013-06-23 13:00,2013-06-23 13:00,admin,admin
190,85275,1346,11525,1473,1,0,N,N,N,CP_Phys,TT_Task,DT_FixedDrtn,RV_OK,TK_NotStart,A11290,Erection of Scaffolding for Pier - Lift 3,3002,0,0,9,0,106,106,9,8,0,8,,,,2013-08-25 10:00,2013-08-26 09:00,,2013-08-25 10:00,2013-08-26 09:00,2013-08-25 10:00,2013-08-26 09:00,2013-08-25 10:00,2013-08-26 09:00,,2013-08-25 10:00,2013-08-26 09:00,,PT_Normal,,,,,dB2iHvAL90il79+38faT5A,i9u0s3BwS0+9BuJieNKhNA,,,Y,0,0,,,2013-06-23 13:00,2013-06-23 13:00,admin,admin
191,85276,1346,11525,1473,1,0,N,N,N,CP_Phys,TT_Task,DT_FixedDrtn,RV_OK,TK_NotStart,A11300,Reinforcement Fixing for Pier - Lift 3,2971,0,0,9,0,116,116,9,8,0,8,,,,2013-08-26 09:00,2013-08-27 08:00,,2013-08-26 09:00,2013-08-27 08:00,2013-08-26 09:00,2013-08-27 08:00,2013-08-26 09:00,2013-08-27 08:00,,2013-08-26 09:00,2013-08-27 08:00,,PT_Normal,,,,,sOsz0TttxU6vWNAl0FcIvw,DgyJ1mNXRF2Hna+a52T2qA,,,Y,0,0,,,2013-06-23 13:00,2013-06-23 13:00,admin,admin
192,85277,1346,11525,1473,1,0,N,N,N,CP_Phys,TT_Task,DT_FixedDrtn,RV_OK,TK_NotStart,A11310,Formwork for Pier - Lift 3,2980,0,0,9,0,77,77,9,8,0,8,,,,2013-08-27 08:00,2013-08-27 17:00,,2013-08-27 08:00,2013-08-27 17:00,2013-08-27 08:00,2013-08-27 17:00,2013-08-27 08:00,2013-08-27 17:00,,2013-08-27 08:00,2013-08-27 17:00,,PT_Normal,,,,,ccnCOl0nAUqcGHOK844JuQ,c99s8T7xT9uh2rxwam+AtQ,,,Y,0,0,,,2013-06-23 13:00,2013-06-23 13:00,admin,admin
193,85278,1346,11525,1473,1,0,N,N,N,CP_Phys,TT_Task,DT_FixedDrtn,RV_OK,TK_NotStart,A11320,Concreting for Pier - Lift 3,2969,0,0,9,0,98,98,9,44,0,44,,,,2013-08-28 07:00,2013-08-28 16:00,,2013-08-28 07:00,2013-08-28 16:00,2013-08-28 07:00,2013-08-28 16:00,2013-08-28 07:00,2013-08-28 16:00,,2013-08-28 07:00,2013-08-28 16:00,,PT_Normal,,,,,3QykHJIUEkOgm0CTnILFRw,T3QF3v6sShq1OO1f522eFg,,,Y,0,0,,,2013-06-23 13:00,2013-06-23 13:00,admin,admin
194,85279,1346,11525,1473,1,0,N,N,N,CP_Phys,TT_Task,DT_FixedDrtn,RV_OK,TK_NotStart,A11330,Setting Out  for Pier,2971,0,0,9,0,29,29,9,9,0,9,,,,2013-08-07 11:00,2013-08-12 10:00,,2013-08-07 11:00,2013-08-12 10:00,2013-08-07 11:00,2013-08-12 10:00,2013-08-07 11:00,2013-08-12 10:00,,2013-08-07 11:00,2013-08-12 10:00,,PT_Normal,,,,,AcMXoAkUtUGONwuJfPGObw,bbLian1+SAuWDLBFu5T7FQ,,,Y,0,0,,,2013-06-23 13:00,2013-06-23 13:00,admin,admin
195,85280,1346,11525,1473,1,0,N,N,N,CP_Phys,TT_Task,DT_FixedDrtn,RV_OK,TK_NotStart,A11340,Reinforcement Cutting & Bending for Pier - Lift 1,2970,120,0,36,0,756,756,36,80,0,80,,,,2013-07-23 09:00,2013-07-28 15:00,,2013-07-07 09:00,2013-07-10 15:00,2013-07-07 09:00,2013-07-10 15:00,2013-07-07 09:00,2013-07-10 15:00,,2013-07-23 09:00,2013-07-28 15:00,,PT_Normal,,,,,JlaY9bJpmkqdJYkmF9WQ6g,5TkEh3KBTyWV6N04bpvmJg,,,N,0,0,,,2013-06-23 13:00,2013-06-23 13:00,admin,admin
196,85281,1346,11525,1473,1,0,N,N,N,CP_Phys,TT_Task,DT_FixedDrtn,RV_OK,TK_NotStart,A11350,Reinforcement Cutting & Bending for Pier - Lift 2,2970,120,0,36,0,756,756,36,80,0,80,,,,2013-07-27 09:00,2013-07-30 15:00,,2013-07-09 09:00,2013-07-14 15:00,2013-07-09 09:00,2013-07-14 15:00,2013-07-09 09:00,2013-07-14 15:00,,2013-07-27 09:00,2013-07-30 15:00,,PT_Normal,,,,,CE2R+NqIuUG1vq3tsb+wNQ,PEzb1h2KTrysu/0FZZqGOg,,,N,0,0,,,2013-06-23 13:00,2013-06-23 13:00,admin,admin
197,85282,1346,11525,1473,1,0,N,N,N,CP_Phys,TT_Task,DT_FixedDrtn,RV_OK,TK_NotStart,A11360,Reinforcement Cutting & Bending for Pier - Lift 3,2970,120,120,180,0,3780,3780,180,400,0,400,,,,2013-07-29 09:00,2013-08-26 09:00,,2013-07-13 09:00,2013-08-06 09:00,2013-07-13 09:00,2013-08-06 09:00,2013-07-13 09:00,2013-08-06 09:00,,2013-07-29 09:00,2013-08-26 09:00,,PT_Normal,,,,,q85szm5N7EGuth1fXL0nqw,AsA79BmhSuaVoN4zzJrKLA,,,N,0,0,,,2013-06-23 13:00,2013-06-23 13:00,admin,admin
198,85283,1346,11525,1473,1,0,N,N,N,CP_Phys,TT_Task,DT_FixedDrtn,RV_OK,TK_NotStart,A11370,Removal of Formwork for Pier,2980,0,0,18,0,160,160,18,20,0,20,,,,2013-08-28 16:00,2013-09-01 14:00,,2013-08-28 16:00,2013-09-01 14:00,2013-08-28 16:00,2013-09-01 14:00,2013-08-28 16:00,2013-09-01 14:00,,2013-08-28 16:00,2013-09-01 14:00,,PT_Normal,,,,,7As62DXPUUy9IBhmnVEkKA,nXMuElLhR4G8F3+J7VTQFQ,,,Y,0,0,,,2013-06-23 13:00,2013-06-23 13:00,admin,admin
199,85284,1346,11525,1473,1,0,N,N,N,CP_Phys,TT_Task,DT_FixedDrtn,RV_OK,TK_NotStart,A11380,Dismantling of Complete Pier Scaffolding,,0,0,9,0,98,98,9,9,0,9,,,,2013-09-01 14:00,2013-09-02 13:00,,2013-09-01 14:00,2013-09-02 13:00,2013-09-01 14:00,2013-09-02 13:00,2013-09-01 14:00,2013-09-02 13:00,,2013-09-01 14:00,2013-09-02 13:00,,PT_Normal,,,,,owJa/LvCE066d6JYjDvC4Q,+vK7U2FhSnqFkyFDdinhtQ,,,Y,0,0,,,2013-06-23 13:00,2013-06-23 13:00,admin,admin
200,85285,1346,11525,1473,1,0,N,N,N,CP_Phys,TT_Task,DT_FixedDrtn,RV_OK,TK_NotStart,A11390,"Application of Primer, Water Proofing Membrane & Protection Board",2971,0,0,20,0,80,80,20,0,0,0,,,,2013-09-02 13:00,2013-09-04 13:00,,2013-09-02 13:00,2013-09-04 13:00,2013-09-02 13:00,2013-09-04 13:00,2013-09-02 13:00,2013-09-04 13:00,,2013-09-02 13:00,2013-09-04 13:00,,PT_Normal,,,,,uFGumcnhxk2eXhEXqa2TLg,HDSrihY+TICgF5QP5sHowA,,,Y,0,0,,,2013-06-23 13:00,2013-06-23 13:00,admin,admin
201,85286,1346,11525,1473,1,0,N,N,N,CP_Phys,TT_Task,DT_FixedDrtn,RV_OK,TK_NotStart,A11400,Application of Bitumen Mastic,2971,0,0,9,0,29,29,9,0,0,0,,,,2013-09-04 13:00,2013-09-07 12:00,,2013-09-04 13:00,2013-09-07 12:00,2013-09-04 13:00,2013-09-07 12:00,2013-09-04 13:00,2013-09-07 12:00,,2013-09-04 13:00,2013-09-07 12:00,,PT_Normal,,,,,XizRr4Zd9kW4Jj/XxnbVwQ,zL3XpFPCT+6PzoaEKjOaHQ,,,Y,0,0,,,2013-06-23 13:00,2013-06-23 13:00,admin,admin
202,85287,1346,11525,1473,1,0,N,N,N,CP_Phys,TT_Task,DT_FixedDrtn,RV_OK,TK_NotStart,A11410,Concrete Screed for Balance Portion of PCC,2971,0,0,9,0,29,29,9,0,0,0,,,,2013-09-04 13:00,2013-09-07 12:00,,2013-09-04 13:00,2013-09-07 12:00,2013-09-04 13:00,2013-09-07 12:00,2013-09-04 13:00,2013-09-07 12:00,,2013-09-04 13:00,2013-09-07 12:00,,PT_Normal,,,,,8j5JAJEX4kStZTuiNIgECQ,MSJNf0QcQk6iJK71Q11Nyw,,,Y,0,0,,,2013-06-23 13:00,2013-06-23 13:00,admin,admin
203,85288,1346,11525,1473,1,0,N,N,N,CP_Phys,TT_Task,DT_FixedDrtn,RV_OK,TK_NotStart,A11420,Completion of Pier Construction 2 - EB - B,,0,0,8,0,0,0,8,0,0,0,,,,2013-09-04 14:00,2013-09-07 12:00,,2013-09-04 14:00,2013-09-07 12:00,2013-09-04 14:00,2013-09-07 12:00,2013-09-04 14:00,2013-09-07 12:00,,2013-09-04 14:00,2013-09-07 12:00,,PT_Normal,,,,,6Y9Mt+foGk6jD/kQwY/JWw,QL4+CnecRrWlEQynnAzncw,,,Y,0,0,,,2013-06-23 13:00,2013-06-23 13:00,admin,admin
204,85289,1346,11525,1473,1,0,N,N,N,CP_Phys,TT_Task,DT_FixedDrtn,RV_OK,TK_NotStart,A11430,Concreting for Pier - Lift 1,2969,0,0,9,0,98,98,9,44,0,44,,,,2013-08-17 16:00,2013-08-18 15:00,,2013-08-17 16:00,2013-08-18 15:00,2013-08-17 16:00,2013-08-18 15:00,2013-08-17 16:00,2013-08-18 15:00,,2013-08-17 16:00,2013-08-18 15:00,,PT_Normal,,,,,C4N2LdAOnkSkyjXfSxVXkQ,7a/oca59QaaCc4Nh852tyQ,,,Y,0,0,,,2013-06-23 13:00,2013-06-23 13:00,admin,admin
205,85290,1346,11525,1473,1,0,N,N,N,CP_Phys,TT_Task,DT_FixedDrtn,RV_OK,TK_NotStart,A11440,Formwork for Pier - Lift 1,2980,0,0,9,0,77,77,9,8,0,8,,,,2013-08-17 07:00,2013-08-17 16:00,,2013-08-17 07:00,2013-08-17 16:00,2013-08-17 07:00,2013-08-17 16:00,2013-08-17 07:00,2013-08-17 16:00,,2013-08-17 07:00,2013-08-17 16:00,,PT_Normal,,,,,8gMr6BFIn0CL69t615ejYg,MUB2sXaZTvWEEfF00IQzUA,,,Y,0,0,,,2013-06-23 13:00,2013-06-23 13:00,admin,admin
206,85291,1346,11518,1473,1,0,N,N,N,CP_Phys,TT_Task,DT_FixedDrtn,RV_OK,TK_NotStart,A132,Erection of Scaffolding for Pier - Lift 1,,0,0,9,0,28,28,9,8,0,8,,,,2013-05-26 10:00,2013-05-27 09:00,,2013-05-26 10:00,2013-05-27 09:00,2013-05-26 10:00,2013-05-27 09:00,2013-05-26 10:00,2013-05-27 09:00,,2013-05-26 10:00,2013-05-27 09:00,,PT_Normal,,,,,JVLh/XmetkChRk7XRrwwew,GcbALm9+QBWDC9iqYiX6Pw,,,Y,0,0,,,2013-06-23 13:00,2013-06-23 13:00,admin,admin
207,85292,1346,11518,1473,1,0,N,N,N,CP_Phys,TT_Task,DT_FixedDrtn,RV_OK,TK_NotStart,A133,Reinforcement Fixing for Pier - Lift 1,2971,0,0,18,0,236,236,18,18,0,18,,,,2013-05-27 09:00,2013-05-28 17:00,,2013-05-27 09:00,2013-05-28 17:00,2013-05-27 09:00,2013-05-28 17:00,2013-05-27 09:00,2013-05-28 17:00,,2013-05-27 09:00,2013-05-28 17:00,,PT_Normal,,,,,r5bpHGJK7k6HN19/FS45AQ,msTTIHAiRY6OuLBKDJSluw,,,Y,0,0,,,2013-06-23 13:00,2013-06-23 13:00,admin,admin
208,85293,1346,11518,1473,1,0,N,N,N,CP_Phys,TT_Task,DT_FixedDrtn,RV_OK,TK_NotStart,A137,Erection of Scaffolding for Pier - Lift 2,3002,0,0,9,0,87,87,9,8,0,8,,,,2013-06-01 15:00,2013-06-02 14:00,,2013-06-01 15:00,2013-06-02 14:00,2013-06-01 15:00,2013-06-02 14:00,2013-06-01 15:00,2013-06-02 14:00,,2013-06-01 15:00,2013-06-02 14:00,,PT_Normal,,,,,aq1KxEaHP0SRYma7tUmLdQ,5aSrilcdSBOUrmwOsPDsTA,,,Y,0,0,,,2013-06-23 13:00,2013-06-23 13:00,admin,admin
209,85294,1346,11518,1473,1,0,N,N,N,CP_Phys,TT_Task,DT_FixedDrtn,RV_OK,TK_NotStart,A139,Reinforcement Fixing for Pier - Lift 2,2971,0,0,18,0,240,240,18,20,0,20,,,,2013-06-02 14:00,2013-06-04 12:00,,2013-06-02 14:00,2013-06-04 12:00,2013-06-02 14:00,2013-06-04 12:00,2013-06-02 14:00,2013-06-04 12:00,,2013-06-02 14:00,2013-06-04 12:00,,PT_Normal,,,,,ca4PXvDwxkulSCMUu6D0Bg,mi1jFfMdSZa/TmFkIqd/4g,,,Y,0,0,,,2013-06-23 13:00,2013-06-23 13:00,admin,admin
210,85295,1346,11518,1473,1,0,N,N,N,CP_Phys,TT_Task,DT_FixedDrtn,RV_OK,TK_NotStart,A140,Formwork for Pier - Lift 2,2980,0,0,9,0,77,77,9,8,0,8,,,,2013-06-04 12:00,2013-06-05 11:00,,2013-06-04 12:00,2013-06-05 11:00,2013-06-04 12:00,2013-06-05 11:00,2013-06-04 12:00,2013-06-05 11:00,,2013-06-04 12:00,2013-06-05 11:00,,PT_Normal,,,,,fmIwiN0u6k2niF9GT/8XbQ,98OtN4xlQaevdyu2ts3eMA,,,Y,0,0,,,2013-06-23 13:00,2013-06-23 13:00,admin,admin
211,85296,1346,11518,1473,1,0,N,N,N,CP_Phys,TT_Task,DT_FixedDrtn,RV_OK,TK_NotStart,A141,Concreting for Pier - Lift 2,2969,0,0,9,0,98,98,9,44,0,44,,,,2013-06-05 11:00,2013-06-08 10:00,,2013-06-05 11:00,2013-06-08 10:00,2013-06-05 11:00,2013-06-08 10:00,2013-06-05 11:00,2013-06-08 10:00,,2013-06-05 11:00,2013-06-08 10:00,,PT_Normal,,,,,r6TI9iV1G027Uwoa3DL+4Q,Cft8CcBSScuUORmMieXWbA,,,Y,0,0,,,2013-06-23 13:00,2013-06-23 13:00,admin,admin
212,85297,1346,11518,1473,1,0,N,N,N,CP_Phys,TT_Task,DT_FixedDrtn,RV_OK,TK_NotStart,A142,Erection of Scaffolding for Pier - Lift 3,3002,17,0,10,0,110,110,10,10,0,10,,,,2013-06-10 07:00,2013-06-10 17:00,,2013-06-08 10:00,2013-06-09 10:00,2013-06-08 10:00,2013-06-09 10:00,2013-06-08 10:00,2013-06-09 10:00,,2013-06-10 07:00,2013-06-10 17:00,,PT_Normal,,,,,5PSFxFS8Z0+09rT8WYvGwQ,m4Drbno7R4mhSCbAOdLjWw,,,N,0,0,,,2013-06-23 13:00,2013-06-23 13:00,admin,admin
213,85298,1346,11518,1473,1,0,N,N,N,CP_Phys,TT_Task,DT_FixedDrtn,RV_OK,TK_NotStart,A143,Reinforcement Fixing for Pier - Lift 3,2971,17,0,9,0,116,116,9,8,0,8,,,,2013-06-11 07:00,2013-06-11 16:00,,2013-06-09 10:00,2013-06-10 09:00,2013-06-09 10:00,2013-06-10 09:00,2013-06-09 10:00,2013-06-10 09:00,,2013-06-11 07:00,2013-06-11 16:00,,PT_Normal,,,,,KwUh8nEl/0y47NzVC6P4Vw,RYeAVzZiRW6rifxJyu9hcg,,,N,0,0,,,2013-06-23 13:00,2013-06-23 13:00,admin,admin
214,85299,1346,11518,1473,1,0,N,N,N,CP_Phys,TT_Task,DT_FixedDrtn,RV_OK,TK_NotStart,A144,Formwork for Pier - Lift 3,2980,17,0,9,0,77,77,9,8,0,8,,,,2013-06-11 16:00,2013-06-12 15:00,,2013-06-10 09:00,2013-06-11 08:00,2013-06-10 09:00,2013-06-11 08:00,2013-06-10 09:00,2013-06-11 08:00,,2013-06-11 16:00,2013-06-12 15:00,,PT_Normal,,,,,OZK1gWcY20WAhmNjY3w7Ig,6ijZmNZ8QlOZcsVhBfp1Rw,,,N,0,0,,,2013-06-23 13:00,2013-06-23 13:00,admin,admin
215,85300,1346,11518,1473,1,0,N,N,N,CP_Phys,TT_Task,DT_FixedDrtn,RV_OK,TK_NotStart,A145,Concreting for Pier - Lift 3,2969,17,0,9,0,98,98,9,44,0,44,,,,2013-06-12 15:00,2013-06-15 14:00,,2013-06-11 08:00,2013-06-11 17:00,2013-06-11 08:00,2013-06-11 17:00,2013-06-11 08:00,2013-06-11 17:00,,2013-06-12 15:00,2013-06-15 14:00,,PT_Normal,,,,,T9RsTrzn6EiCRPa+D34XjA,J/ipkUUHSxWvYFIZFSbRRQ,,,N,0,0,,,2013-06-23 13:00,2013-06-23 13:00,admin,admin
216,85301,1346,11518,1473,1,0,N,N,N,CP_Phys,TT_Task,DT_FixedDrtn,RV_OK,TK_NotStart,A130,Setting Out  for Pier,2971,0,0,9,0,10,10,9,0,0,0,,,,2013-05-25 11:00,2013-05-26 10:00,,2013-05-25 11:00,2013-05-26 10:00,2013-05-25 11:00,2013-05-26 10:00,2013-05-25 11:00,2013-05-26 10:00,,2013-05-25 11:00,2013-05-26 10:00,,PT_Normal,,,,,N2ztRH6kw06B1ysaV0+aNg,CNQBrgvQQ4iASisfdjVfkw,,,Y,0,0,,,2013-06-23 13:00,2013-06-23 13:00,admin,admin
217,85302,1346,11518,1473,1,0,N,N,N,CP_Phys,TT_Task,DT_FixedDrtn,RV_OK,TK_NotStart,A131,Reinforcement Cutting & Bending for Pier - Lift 1,2970,120,0,36,0,756,756,36,80,0,80,,,,2013-05-20 13:00,2013-05-26 09:00,,2013-05-04 13:00,2013-05-08 09:00,2013-05-04 13:00,2013-05-08 09:00,2013-05-04 13:00,2013-05-08 09:00,,2013-05-20 13:00,2013-05-26 09:00,,PT_Normal,,,,,TUIj8a6Hr0CAyolCAGX6uA,zVvbf+UiSWmRxcXer0ZIJg,,,N,0,0,,,2013-06-23 13:00,2013-06-23 13:00,admin,admin
218,85303,1346,11518,1473,1,0,N,N,N,CP_Phys,TT_Task,DT_FixedDrtn,RV_OK,TK_NotStart,A134,Reinforcement Cutting & Bending for Pier - Lift 2,2970,120,0,36,0,756,756,36,80,0,80,,,,2013-05-22 13:00,2013-05-28 09:00,,2013-05-06 13:00,2013-05-12 09:00,2013-05-06 13:00,2013-05-12 09:00,2013-05-06 13:00,2013-05-12 09:00,,2013-05-22 13:00,2013-05-28 09:00,,PT_Normal,,,,,F8FJlOdWbUOEW7X7Rz+AFA,O/p9ry6HQiiAJEys7X0J4A,,,N,0,0,,,2013-06-23 13:00,2013-06-23 13:00,admin,admin
219,85304,1346,11518,1473,1,0,N,N,N,CP_Phys,TT_Task,DT_FixedDrtn,RV_OK,TK_NotStart,A138,Reinforcement Cutting & Bending for Pier - Lift 3,2970,120,0,36,0,756,756,36,80,0,80,,,,2013-05-26 13:00,2013-06-01 09:00,,2013-05-08 13:00,2013-05-14 09:00,2013-05-08 13:00,2013-05-14 09:00,2013-05-08 13:00,2013-05-14 09:00,,2013-05-26 13:00,2013-06-01 09:00,,PT_Normal,,,,,tvqzeEL0wE6en0oIZ64i6g,mJm1wCT6S0CnwMQPAcnSIA,,,N,0,0,,,2013-06-23 13:00,2013-06-23 13:00,admin,admin
220,85305,1346,11518,1473,1,0,N,N,N,CP_Phys,TT_Task,DT_FixedDrtn,RV_OK,TK_NotStart,A146,Removal of Formwork for Pier,2980,17,0,18,0,160,160,18,20,0,20,,,,2013-06-15 14:00,2013-06-17 12:00,,2013-06-12 07:00,2013-06-15 15:00,2013-06-12 07:00,2013-06-15 15:00,2013-06-12 07:00,2013-06-15 15:00,,2013-06-15 14:00,2013-06-17 12:00,,PT_Normal,,,,,DO7OvB4b/UirXiYtreH2+w,bT0R7BC8TzSEx4jI3W8isg,,,N,0,0,,,2013-06-23 13:00,2013-06-23 13:00,admin,admin
221,85306,1346,11518,1473,1,0,N,N,N,CP_Phys,TT_Task,DT_FixedDrtn,RV_OK,TK_NotStart,A147,Dismantling of Complete Pier Scaffolding,2969,271,0,9,0,98,98,9,9,0,9,,,,2013-07-22 16:00,2013-07-23 15:00,,2013-06-15 15:00,2013-06-16 14:00,2013-06-15 15:00,2013-06-16 14:00,2013-06-15 15:00,2013-06-16 14:00,,2013-07-22 16:00,2013-07-23 15:00,,PT_Normal,,,,,yckAUnW+FU2S+toeOXjyYQ,spxANjyKTmiVzJnokAq8ag,,,N,0,0,,,2013-06-23 13:00,2013-06-23 13:00,admin,admin
222,85307,1346,11518,1473,1,0,N,N,N,CP_Phys,TT_Task,DT_FixedDrtn,RV_OK,TK_NotStart,A148,"Application of Primer, Water Proofing Membrane & Protection Board",2971,271,0,20,0,80,80,20,0,0,0,,,,2013-07-23 15:00,2013-07-27 15:00,,2013-06-16 14:00,2013-06-18 14:00,2013-06-16 14:00,2013-06-18 14:00,2013-06-16 14:00,2013-06-18 14:00,,2013-07-23 15:00,2013-07-27 15:00,,PT_Normal,,,,,Dyb18W8YwEGMhLcIjHDWUw,iX1S5599TlSry1QWZtGT8Q,,,N,0,0,,,2013-06-23 13:00,2013-06-23 13:00,admin,admin
223,85308,1346,11518,1473,1,0,N,N,N,CP_Phys,TT_Task,DT_FixedDrtn,RV_OK,TK_NotStart,A149,Application of Bitumen Mastic,2971,271,0,9,0,29,29,9,0,0,0,,,,2013-07-27 15:00,2013-07-28 14:00,,2013-06-18 14:00,2013-06-19 13:00,2013-06-18 14:00,2013-06-19 13:00,2013-06-18 14:00,2013-06-19 13:00,,2013-07-27 15:00,2013-07-28 14:00,,PT_Normal,,,,,2WvX19LyUk2lN73nWd+NJw,djGxfF0BSGyA9DXqKwq69w,,,N,0,0,,,2013-06-23 13:00,2013-06-23 13:00,admin,admin
224,85309,1346,11518,1473,1,0,N,N,N,CP_Phys,TT_Task,DT_FixedDrtn,RV_OK,TK_NotStart,A150,Concrete Screed for Balance Portion of PCC,2971,271,0,9,0,29,29,9,0,0,0,,,,2013-07-27 15:00,2013-07-28 14:00,,2013-06-18 14:00,2013-06-19 13:00,2013-06-18 14:00,2013-06-19 13:00,2013-06-18 14:00,2013-06-19 13:00,,2013-07-27 15:00,2013-07-28 14:00,,PT_Normal,,,,,5MMx3mNw+kGsjS+wAtXGdA,xJZn2gXeTwSLslMPDcpGEA,,,N,0,0,,,2013-06-23 13:00,2013-06-23 13:00,admin,admin
225,85310,1346,11518,1473,1,0,N,N,N,CP_Phys,TT_Task,DT_FixedDrtn,RV_OK,TK_NotStart,A151,Completion of Pier Construction 2 - WB - B,,271,119,8,0,0,0,8,0,0,0,,,,2013-07-27 16:00,2013-07-28 14:00,,2013-06-18 15:00,2013-06-19 13:00,2013-06-18 15:00,2013-06-19 13:00,2013-06-18 15:00,2013-06-19 13:00,,2013-07-27 16:00,2013-07-28 14:00,,PT_Normal,,,,,MXvTOHU0LUiLPuBcbJa41w,inVGG1rkSkeG2SlYksplgg,,,N,0,0,,,2013-06-23 13:00,2013-06-23 13:00,admin,admin
226,85311,1346,11518,1473,1,0,N,N,N,CP_Phys,TT_Task,DT_FixedDrtn,RV_OK,TK_NotStart,A136,Concreting for Pier - Lift 1,2969,0,0,9,0,98,98,9,44,0,44,,,,2013-05-29 16:00,2013-06-01 15:00,,2013-05-29 16:00,2013-06-01 15:00,2013-05-29 16:00,2013-06-01 15:00,2013-05-29 16:00,2013-06-01 15:00,,2013-05-29 16:00,2013-06-01 15:00,,PT_Normal,,,,,aNwNKxoruEGl/dVoP5nO0Q,Tasu0TFrRwSE0JdjqaHsuw,,,Y,0,0,,,2013-06-23 13:00,2013-06-23 13:00,admin,admin
227,85312,1346,11518,1473,1,0,N,N,N,CP_Phys,TT_Task,DT_FixedDrtn,RV_OK,TK_NotStart,A135,Formwork for Pier - Lift 1,2980,0,0,9,0,77,77,9,8,0,8,,,,2013-05-29 07:00,2013-05-29 16:00,,2013-05-29 07:00,2013-05-29 16:00,2013-05-29 07:00,2013-05-29 16:00,2013-05-29 07:00,2013-05-29 16:00,,2013-05-29 07:00,2013-05-29 16:00,,PT_Normal,,,,,pngJ4vvBLEerpxmsRE1AdA,85L89MJVSRG0eSn04Y4BsA,,,Y,0,0,,,2013-06-23 13:00,2013-06-23 13:00,admin,admin
228,85313,1346,11519,1473,1,0,N,N,N,CP_Phys,TT_Task,DT_FixedDrtn,RV_OK,TK_NotStart,A199,Erection of Scaffolding for Pier - Lift 1,3002,0,0,9,0,69,69,9,8,0,8,,,,2013-07-02 10:00,2013-07-03 09:00,,2013-07-02 10:00,2013-07-03 09:00,2013-07-02 10:00,2013-07-03 09:00,2013-07-02 10:00,2013-07-03 09:00,,2013-07-02 10:00,2013-07-03 09:00,,PT_Normal,,,,,dDNt39XSpEChn41zBkz3+A,qxP/iHOZQyGeUGavp3+iqw,,,Y,0,0,,,2013-06-23 13:00,2013-06-23 13:00,admin,admin
229,85314,1346,11519,1473,1,0,N,N,N,CP_Phys,TT_Task,DT_FixedDrtn,RV_OK,TK_NotStart,A201,Reinforcement Fixing for Pier - Lift 1,2971,0,0,18,0,162,162,18,18,0,18,,,,2013-07-03 09:00,2013-07-06 17:00,,2013-07-03 09:00,2013-07-06 17:00,2013-07-03 09:00,2013-07-06 17:00,2013-07-03 09:00,2013-07-06 17:00,,2013-07-03 09:00,2013-07-06 17:00,,PT_Normal,,,,,6aTANlfvLk6FRcUvH8oK1Q,cU8UBHW7Ryy7fG49zBLy7Q,,,Y,0,0,,,2013-06-23 13:00,2013-06-23 13:00,admin,admin
230,85315,1346,11519,1473,1,0,N,N,N,CP_Phys,TT_Task,DT_FixedDrtn,RV_OK,TK_NotStart,A204,Erection of Scaffolding for Pier - Lift 2,3002,0,0,9,0,92,92,9,8,0,8,,,,2013-07-08 15:00,2013-07-09 14:00,,2013-07-08 15:00,2013-07-09 14:00,2013-07-08 15:00,2013-07-09 14:00,2013-07-08 15:00,2013-07-09 14:00,,2013-07-08 15:00,2013-07-09 14:00,,PT_Normal,,,,,LgdRhpRdU0qarvEiGwNHnw,CVmLuSPgQ8aZR3/rnTSOjQ,,,Y,0,0,,,2013-06-23 13:00,2013-06-23 13:00,admin,admin
231,85316,1346,11519,1473,1,0,N,N,N,CP_Phys,TT_Task,DT_FixedDrtn,RV_OK,TK_NotStart,A205,Reinforcement Fixing for Pier - Lift 2,2971,0,0,18,0,240,240,18,20,0,20,,,,2013-07-09 14:00,2013-07-13 12:00,,2013-07-09 14:00,2013-07-13 12:00,2013-07-09 14:00,2013-07-13 12:00,2013-07-09 14:00,2013-07-13 12:00,,2013-07-09 14:00,2013-07-13 12:00,,PT_Normal,,,,,6PpIxXxvq0SVAanA4SAr5A,RYRC7au4Qgq7SaWdqFLnBA,,,Y,0,0,,,2013-06-23 13:00,2013-06-23 13:00,admin,admin
232,85317,1346,11519,1473,1,0,N,N,N,CP_Phys,TT_Task,DT_FixedDrtn,RV_OK,TK_NotStart,A206,Formwork for Pier - Lift 2,2980,0,0,9,0,77,77,9,8,0,8,,,,2013-07-13 12:00,2013-07-14 11:00,,2013-07-13 12:00,2013-07-14 11:00,2013-07-13 12:00,2013-07-14 11:00,2013-07-13 12:00,2013-07-14 11:00,,2013-07-13 12:00,2013-07-14 11:00,,PT_Normal,,,,,cFtFHeOnAUy5SGGV6vll/Q,Ml3eDCg5QOaA2wf1XDXNdQ,,,Y,0,0,,,2013-06-23 13:00,2013-06-23 13:00,admin,admin
233,85318,1346,11519,1473,1,0,N,N,N,CP_Phys,TT_Task,DT_FixedDrtn,RV_OK,TK_NotStart,A207,Concreting for Pier - Lift 2,2969,0,0,9,0,98,98,9,42,0,42,,,,2013-07-14 11:00,2013-07-15 10:00,,2013-07-14 11:00,2013-07-15 10:00,2013-07-14 11:00,2013-07-15 10:00,2013-07-14 11:00,2013-07-15 10:00,,2013-07-14 11:00,2013-07-15 10:00,,PT_Normal,,,,,GRYaSLVsZkuzLdNhjlnb4A,+nbOYLV+TlmmdSfOF4F76Q,,,Y,0,0,,,2013-06-23 13:00,2013-06-23 13:00,admin,admin
234,85319,1346,11519,1473,1,0,N,N,N,CP_Phys,TT_Task,DT_FixedDrtn,RV_OK,TK_NotStart,A208,Erection of Scaffolding for Pier - Lift 3,3002,18,0,9,0,106,106,9,8,0,8,,,,2013-07-17 08:00,2013-07-17 17:00,,2013-07-15 10:00,2013-07-16 09:00,2013-07-15 10:00,2013-07-16 09:00,2013-07-15 10:00,2013-07-16 09:00,,2013-07-17 08:00,2013-07-17 17:00,,PT_Normal,,,,,LYKLucb8eUq6ZsEV7jzONg,jiLIp7o1QIa1F5z1jGy8iw,,,N,0,0,,,2013-06-23 13:00,2013-06-23 13:00,admin,admin
235,85320,1346,11519,1473,1,0,N,N,N,CP_Phys,TT_Task,DT_FixedDrtn,RV_OK,TK_NotStart,A209,Reinforcement Fixing for Pier - Lift 3,2971,18,0,9,0,116,116,9,8,0,8,,,,2013-07-20 07:00,2013-07-20 16:00,,2013-07-16 09:00,2013-07-17 08:00,2013-07-16 09:00,2013-07-17 08:00,2013-07-16 09:00,2013-07-17 08:00,,2013-07-20 07:00,2013-07-20 16:00,,PT_Normal,,,,,JUQLppZ0WUOYbtB6qhQhFA,gJTgFZjSRP2HF2EgvIvdmg,,,N,0,0,,,2013-06-23 13:00,2013-06-23 13:00,admin,admin
236,85321,1346,11519,1473,1,0,N,N,N,CP_Phys,TT_Task,DT_FixedDrtn,RV_OK,TK_NotStart,A210,Formwork for Pier - Lift 3,2980,18,0,9,0,77,77,9,8,0,8,,,,2013-07-20 16:00,2013-07-21 15:00,,2013-07-17 08:00,2013-07-17 17:00,2013-07-17 08:00,2013-07-17 17:00,2013-07-17 08:00,2013-07-17 17:00,,2013-07-20 16:00,2013-07-21 15:00,,PT_Normal,,,,,Idh/oHn/vEq19fJGYMLcRw,qmJKEWi4SW+53pXN/Ff2AQ,,,N,0,0,,,2013-06-23 13:00,2013-06-23 13:00,admin,admin
237,85322,1346,11519,1473,1,0,N,N,N,CP_Phys,TT_Task,DT_FixedDrtn,RV_OK,TK_NotStart,A211,Concreting for Pier - Lift 3,2969,18,0,9,0,98,98,9,33,0,33,,,,2013-07-21 15:00,2013-07-22 14:00,,2013-07-20 07:00,2013-07-20 16:00,2013-07-20 07:00,2013-07-20 16:00,2013-07-20 07:00,2013-07-20 16:00,,2013-07-21 15:00,2013-07-22 14:00,,PT_Normal,,,,,4vE/4FdIgku2S77gtaGREQ,UfjHSq42QrSwJC5wRbln9g,,,N,0,0,,,2013-06-23 13:00,2013-06-23 13:00,admin,admin
238,85323,1346,11519,1473,1,0,N,N,N,CP_Phys,TT_Task,DT_FixedDrtn,RV_OK,TK_NotStart,A198,Setting Out  for Pier,2971,0,0,9,0,27,27,9,9,0,9,,,,2013-07-01 11:00,2013-07-02 10:00,,2013-07-01 11:00,2013-07-02 10:00,2013-07-01 11:00,2013-07-02 10:00,2013-07-01 11:00,2013-07-02 10:00,,2013-07-01 11:00,2013-07-02 10:00,,PT_Normal,,,,,yYbJIvi5wE2qjME3Ts2GhQ,nu5d64JPQ2y8mer0fwn4Qg,,,Y,0,0,,,2013-06-23 13:00,2013-06-23 13:00,admin,admin
239,85324,1346,11519,1473,1,0,N,N,N,CP_Phys,TT_Task,DT_FixedDrtn,RV_OK,TK_NotStart,A196,Reinforcement Cutting & Bending for Pier - Lift 1,2970,120,0,36,0,756,756,36,80,0,80,,,,2013-06-22 11:00,2013-06-25 17:00,,2013-06-04 11:00,2013-06-09 17:00,2013-06-04 11:00,2013-06-09 17:00,2013-06-04 11:00,2013-06-09 17:00,,2013-06-22 11:00,2013-06-25 17:00,,PT_Normal,,,,,G17Dugw+yEqUAMqVEcgDlw,otc5WjVHR9aW+ccZpItsUg,,,N,0,0,,,2013-06-23 13:00,2013-06-23 13:00,admin,admin
240,85325,1346,11519,1473,1,0,N,N,N,CP_Phys,TT_Task,DT_FixedDrtn,RV_OK,TK_NotStart,A197,Reinforcement Cutting & Bending for Pier - Lift 2,2970,120,0,36,0,756,756,36,80,0,80,,,,2013-06-24 11:00,2013-06-29 17:00,,2013-06-08 11:00,2013-06-11 17:00,2013-06-08 11:00,2013-06-11 17:00,2013-06-08 11:00,2013-06-11 17:00,,2013-06-24 11:00,2013-06-29 17:00,,PT_Normal,,,,,JQyvTpn6kUmSexp6WF9bkg,yPAuskwkTJOV7T7KyGWqvw,,,N,0,0,,,2013-06-23 13:00,2013-06-23 13:00,admin,admin
241,85326,1346,11519,1473,1,0,N,N,N,CP_Phys,TT_Task,DT_FixedDrtn,RV_OK,TK_NotStart,A200,Reinforcement Cutting & Bending for Pier - Lift 3,2970,120,0,36,0,756,756,36,80,0,80,,,,2013-06-26 11:00,2013-07-01 17:00,,2013-06-10 11:00,2013-06-15 17:00,2013-06-10 11:00,2013-06-15 17:00,2013-06-10 11:00,2013-06-15 17:00,,2013-06-26 11:00,2013-07-01 17:00,,PT_Normal,,,,,uZ9RvdWwh0eqSQ/zrhb5Lw,jqCXYAfCSm6WHPdVJ+gt3g,,,N,0,0,,,2013-06-23 13:00,2013-06-23 13:00,admin,admin
242,85327,1346,11519,1473,1,0,N,N,N,CP_Phys,TT_Task,DT_FixedDrtn,RV_OK,TK_NotStart,A212,Removal of Formwork for Pier,2980,18,0,18,0,100,100,18,20,0,20,,,,2013-07-22 14:00,2013-07-24 12:00,,2013-07-20 16:00,2013-07-22 14:00,2013-07-20 16:00,2013-07-22 14:00,2013-07-20 16:00,2013-07-22 14:00,,2013-07-22 14:00,2013-07-24 12:00,,PT_Normal,,,,,nfIPSVjp4E6z61JPJdLcZg,CldgxzeeTDiyMFnnDy+2IA,,,N,0,0,,,2013-06-23 13:00,2013-06-23 13:00,admin,admin
243,85328,1346,11519,1473,1,0,N,N,N,CP_Phys,TT_Task,DT_FixedDrtn,RV_OK,TK_NotStart,A213,Dismantling of Complete Pier Scaffolding,2980,139,19,80,0,951.111112,951.111112,80,80,0,80,,,,2013-08-13 13:00,2013-08-25 13:00,,2013-07-22 14:00,2013-08-03 14:00,2013-07-22 14:00,2013-08-03 14:00,2013-07-22 14:00,2013-08-03 14:00,,2013-08-13 13:00,2013-08-25 13:00,,PT_Normal,,,,,Ct7cafc8OUOQRjSTx7PeQA,KXZ99NQNTZWjeXjHXNa8pw,,,N,0,0,,,2013-06-23 13:00,2013-06-23 13:00,admin,admin
244,85329,1346,11519,1473,1,0,N,N,N,CP_Phys,TT_Task,DT_FixedDrtn,RV_OK,TK_NotStart,A214,"Application of Primer, Water Proofing Membrane & Protection Board",2971,120,0,20,0,80,80,20,0,0,0,,,,2013-08-25 13:00,2013-08-27 13:00,,2013-08-05 13:00,2013-08-07 13:00,2013-08-05 13:00,2013-08-07 13:00,2013-08-05 13:00,2013-08-07 13:00,,2013-08-25 13:00,2013-08-27 13:00,,PT_Normal,,,,,RTYJYZ3avkWVkqVp7XNvcg,KAUtzqcAQnyahwhYF80Oeg,,,N,0,0,,,2013-06-23 13:00,2013-06-23 13:00,admin,admin
245,85330,1346,11519,1473,1,0,N,N,N,CP_Phys,TT_Task,DT_FixedDrtn,RV_OK,TK_NotStart,A215,Application of Bitumen Mastic,2971,120,0,9,0,27,27,9,0,0,0,,,,2013-08-27 13:00,2013-08-28 12:00,,2013-08-07 13:00,2013-08-12 12:00,2013-08-07 13:00,2013-08-12 12:00,2013-08-07 13:00,2013-08-12 12:00,,2013-08-27 13:00,2013-08-28 12:00,,PT_Normal,,,,,Be+66gAAlEWmiMmVIxV7nA,DapF73W9SSSz6GtzBGUnGQ,,,N,0,0,,,2013-06-23 13:00,2013-06-23 13:00,admin,admin
246,85331,1346,11519,1473,1,0,N,N,N,CP_Phys,TT_Task,DT_FixedDrtn,RV_OK,TK_NotStart,A216,Concrete Screed for Balance Portion of PCC,2971,120,0,9,0,27,27,9,0,0,0,,,,2013-08-27 13:00,2013-08-28 12:00,,2013-08-07 13:00,2013-08-12 12:00,2013-08-07 13:00,2013-08-12 12:00,2013-08-07 13:00,2013-08-12 12:00,,2013-08-27 13:00,2013-08-28 12:00,,PT_Normal,,,,,VU5GjHWjEEWIAlaKImm0ZA,6rdtniM6R3yY6dYHqqot6g,,,N,0,0,,,2013-06-23 13:00,2013-06-23 13:00,admin,admin
247,85332,1346,11519,1473,1,0,N,N,N,CP_Phys,TT_Task,DT_FixedDrtn,RV_OK,TK_NotStart,A217,Completion of Pier Construction 1 - EB - A,,120,0,8,0,0,0,8,0,0,0,,,,2013-08-27 14:00,2013-08-28 12:00,,2013-08-07 14:00,2013-08-12 12:00,2013-08-07 14:00,2013-08-12 12:00,2013-08-07 14:00,2013-08-12 12:00,,2013-08-27 14:00,2013-08-28 12:00,,PT_Normal,,,,,lrSw5+NTzkyKaIenaa2TGw,Y1qETSjtQvO2cGDlptxf3Q,,,N,0,0,,,2013-06-23 13:00,2013-06-23 13:00,admin,admin
248,85333,1346,11519,1473,1,0,N,N,N,CP_Phys,TT_Task,DT_FixedDrtn,RV_OK,TK_NotStart,A203,Concreting for Pier - Lift 1,2969,0,0,9,0,96,96,9,42,0,42,,,,2013-07-07 16:00,2013-07-08 15:00,,2013-07-07 16:00,2013-07-08 15:00,2013-07-07 16:00,2013-07-08 15:00,2013-07-07 16:00,2013-07-08 15:00,,2013-07-07 16:00,2013-07-08 15:00,,PT_Normal,,,,,wy/dxoqKk0W+NqdN51KvCg,9y4iMpmXQwGNTw4bVLdbcA,,,Y,0,0,,,2013-06-23 13:00,2013-06-23 13:00,admin,admin
249,85334,1346,11519,1473,1,0,N,N,N,CP_Phys,TT_Task,DT_FixedDrtn,RV_OK,TK_NotStart,A202,Formwork for Pier - Lift 1,2980,0,0,9,0,77,77,9,8,0,8,,,,2013-07-07 07:00,2013-07-07 16:00,,2013-07-07 07:00,2013-07-07 16:00,2013-07-07 07:00,2013-07-07 16:00,2013-07-07 07:00,2013-07-07 16:00,,2013-07-07 07:00,2013-07-07 16:00,,PT_Normal,,,,,8b/QFoQElEWXU2eI0xUPgw,E0I1UWeMScKuFXYSNzkeNQ,,,Y,0,0,,,2013-06-23 13:00,2013-06-23 13:00,admin,admin
250,85335,1346,11533,1473,1,100,N,N,N,CP_Phys,TT_Task,DT_FixedDrtn,RV_OK,TK_Complete,A86,Setting Out for Raft Foundations,2983,,,0,54,0,54,18,18,0,0,,2013-02-09 00:00,2013-02-11 00:00,2013-05-26 15:00,2013-05-26 15:00,,2013-04-23 00:00,2013-04-23 00:00,,,2013-05-05 07:00,2013-05-06 15:00,,,,,PT_Normal,,,,,mx/MKhSzOEa1zhycdhUaZg,P/37FxNbRxyXwWPd5+oB4g,,,N,54,0,,,2013-06-23 13:00,2013-06-23 13:00,admin,admin
251,85336,1346,11533,1473,1,100,N,N,N,CP_Phys,TT_Task,DT_FixedDrtn,RV_OK,TK_Complete,A88,Structural Excavation,2984,,,0,245,0,245,45,208,208,0,,2013-02-11 00:00,2013-02-18 00:00,2013-05-26 15:00,2013-05-26 15:00,,2013-04-23 00:00,2013-04-23 00:00,,,2013-05-05 07:00,2013-05-11 12:00,,,,,PT_Normal,,,,,0ehS5TlddES7uqAntDNWlA,Vzg3F1tHQT+2GOlvR8z5ig,,,N,245,208,,,2013-06-23 13:00,2013-06-23 13:00,admin,admin
252,85337,1346,11533,1473,1,100,N,N,N,CP_Phys,TT_Task,DT_FixedDrtn,RV_OK,TK_Complete,A100,Placing of Blinding Concrete,2969,,,0,61,0,61,9,16,16,0,,2013-03-06 00:00,2013-03-09 00:00,2013-05-26 15:00,2013-05-26 15:00,,2013-04-23 00:00,2013-04-23 00:00,,,2013-05-05 07:00,2013-05-05 16:00,,,,,PT_Normal,,,,,BFYL0pMjjEqdKCVt353YIw,RBoxD43SRmCZR3jBcZ2fwA,,,N,61,16,,,2013-06-23 13:00,2013-06-23 13:00,admin,admin
253,85338,1346,11533,1473,1,0,N,N,N,CP_Phys,TT_Task,DT_FixedDrtn,RV_OK,TK_NotStart,A103,Reinforcement Fixing for Raft Foundations,2970,238,0,40,0,681.481482,681.481482,40,40,0,40,,,,2013-05-26 15:00,2013-06-01 15:00,,2013-04-23 07:00,2013-04-28 17:00,2013-04-23 07:00,2013-04-28 17:00,2013-04-23 07:00,2013-04-28 17:00,,2013-05-26 15:00,2013-06-01 15:00,,PT_Normal,,,,,y8IAUPnv606Pxrkt2USmzA,fs9lg0kYQYC6ni+xBG+efw,,,N,0,0,,,2013-06-23 13:00,2013-06-23 13:00,admin,admin
254,85339,1346,11533,1473,1,0,N,N,N,CP_Phys,TT_Task,DT_FixedDrtn,RV_OK,TK_NotStart,A104,Formworks for Raft Foundations,2969,238,0,9,0,258,258,9,9,0,9,,,,2013-06-01 15:00,2013-06-02 14:00,,2013-04-29 07:00,2013-04-29 16:00,2013-04-29 07:00,2013-04-29 16:00,2013-04-29 07:00,2013-04-29 16:00,,2013-06-01 15:00,2013-06-02 14:00,,PT_Normal,,,,,b5tofF2PJk6cL/GW2vOeQg,SnlOWJqKSyiRNP7ij84hjA,,,N,0,0,,,2013-06-23 13:00,2013-06-23 13:00,admin,admin
255,85340,1346,11533,1473,1,0,N,N,N,CP_Phys,TT_Task,DT_FixedDrtn,RV_OK,TK_NotStart,A105,Concreting for Raft Foundations,2984,238,0,9,0,170,170,9,109,0,109,,,,2013-06-02 14:00,2013-06-03 13:00,,2013-04-29 16:00,2013-04-30 15:00,2013-04-29 16:00,2013-04-30 15:00,2013-04-29 16:00,2013-04-30 15:00,,2013-06-02 14:00,2013-06-03 13:00,,PT_Normal,,,,,2gVwE0lQkUiJ7hF0XvH2Wg,+8cM9y4USsiJpBEJjVVXjQ,,,N,0,0,,,2013-06-23 13:00,2013-06-23 13:00,admin,admin
256,85341,1346,11533,1473,1,100,N,N,N,CP_Phys,TT_Task,DT_FixedDrtn,RV_OK,TK_Complete,A84,Preparation & Submission of Bar Schedule Drawings,,,,0,0,0,0,80,0,0,0,,2013-02-09 00:00,2013-02-16 00:00,2013-05-26 15:00,2013-05-26 15:00,,2013-04-23 00:00,2013-04-23 00:00,,,2013-05-15 07:00,2013-05-26 17:00,,,,,PT_Normal,,,,,YKTYn2DyO0OAqlb7+4A4OA,g+XkgSeZTu2kP4mALJtRAA,,,N,0,0,,,2013-06-23 13:00,2013-06-23 13:00,admin,admin
257,85342,1346,11533,1473,1,100,N,N,N,CP_Phys,TT_Task,DT_FixedDrtn,RV_OK,TK_Complete,A83,Approval of Shop Drawings,,,,0,0,0,0,140,0,0,0,,2013-02-09 00:00,2013-02-23 00:00,2013-05-26 15:00,2013-05-26 15:00,,2013-04-23 00:00,2013-04-23 00:00,,,2013-05-15 07:00,2013-06-03 17:00,,,,,PT_Normal,,,,,T7L2r1TLbEGZ0uuwtd3S4g,OQopEzVLTwW0mg1iSVzkEg,,,N,0,0,,,2013-06-23 13:00,2013-06-23 13:00,admin,admin
258,85343,1346,11533,1473,1,100,N,N,N,CP_Phys,TT_Task,DT_FixedDrtn,RV_OK,TK_Complete,A101,"Application of Primer, Water Proofing Membrane",2971,,,0,147,0,147,27,0,0,0,,2013-03-12 00:00,2013-03-17 00:00,2013-05-26 15:00,2013-05-26 15:00,,2013-04-23 07:00,2013-04-23 07:00,,,2013-04-23 07:00,2013-04-27 14:00,,,,,PT_Normal,,,,,XA8h4lpVa0Wn1EoSTBVtig,fYkarEsMSZeKEwC1lDBUGg,,,N,147,0,,,2013-06-23 13:00,2013-06-23 13:00,admin,admin
259,85344,1346,11533,1473,1,100,N,N,N,CP_Phys,TT_Task,DT_FixedDrtn,RV_OK,TK_Complete,A87,Reinforcement Cutting & Bending for Raft Foundations,2970,,,0,1320,0,1320,60,36,36,0,,2013-02-27 00:00,2013-03-09 00:00,2013-05-26 15:00,2013-05-26 15:00,,2013-04-23 00:00,2013-04-23 00:00,,,2013-05-05 07:00,2013-05-12 17:00,,,,,PT_Normal,,,,,2dwwvAhlx0C9MjFlo6c4Qg,t/+cFV11QwGhcDeqxga5Lw,,,N,1320,36,,,2013-06-23 13:00,2013-06-23 13:00,admin,admin
260,85345,1346,11533,1473,1,0,N,N,N,CP_Phys,TT_Task,DT_FixedDrtn,RV_OK,TK_NotStart,A106,Removal of Formwork for Raft Foundations,2980,238,0,18,0,156,156,18,18,0,18,,,,2013-06-03 13:00,2013-06-05 11:00,,2013-04-30 15:00,2013-05-04 13:00,2013-04-30 15:00,2013-05-04 13:00,2013-04-30 15:00,2013-05-04 13:00,,2013-06-03 13:00,2013-06-05 11:00,,PT_Normal,,,,,MGjyp/GtKku4PjwA6Fh9qA,7oWTFqihQr+5PeHK+0kH5w,,,N,0,0,,,2013-06-23 13:00,2013-06-23 13:00,admin,admin
261,85346,1346,11533,1473,1,100,N,N,N,CP_Phys,TT_Task,DT_FixedDrtn,RV_OK,TK_Complete,A82,Preparation & Submission of Shop Drawings,,,,0,0,0,0,80,0,0,0,,2013-01-28 00:00,2013-02-09 00:00,2013-05-26 15:00,2013-05-26 15:00,,2013-04-23 00:00,2013-04-23 00:00,,,2013-05-05 07:00,2013-05-14 17:00,,,,,PT_Normal,,,,,zD4/zSi7jkidAXKIb/n7mA,RDt0EYSjQ5yfJrRSbcilWg,,,N,0,0,,,2013-06-23 13:00,2013-06-23 13:00,admin,admin
262,85347,1346,11533,1473,1,100,N,N,N,CP_Phys,TT_Task,DT_FixedDrtn,RV_OK,TK_Complete,A85,Approval of Bar Schedule Drawings,,,,0,0,0,0,140,0,0,0,,2013-02-16 00:00,2013-02-27 00:00,2013-05-26 15:00,2013-05-26 15:00,,2013-04-23 00:00,2013-04-23 00:00,,,2013-05-27 07:00,2013-06-15 17:00,,,,,PT_Normal,,,,,+KiIZFimjUyHG1xRn6iMeg,k7qejDZ4T8+Qp8W3HysgTg,,,N,0,0,,,2013-06-23 13:00,2013-06-23 13:00,admin,admin
263,85348,1346,11533,1473,1,100,N,N,N,CP_Phys,TT_Task,DT_FixedDrtn,RV_OK,TK_Complete,A89,Foundation Beds Prepration,2971,,,0,196,0,196,36,0,0,0,,2013-02-24 00:00,2013-02-27 00:00,2013-05-26 15:00,2013-05-26 15:00,,2013-04-23 00:00,2013-04-23 00:00,,,2013-05-05 07:00,2013-05-08 13:00,,,,,PT_Normal,,,,,OQ6lhbLbFkuQNdkuhU/Tow,oi7GWKwGTQ2Zcvs7uGEAaA,,,N,196,0,,,2013-06-23 13:00,2013-06-23 13:00,admin,admin
264,85349,1346,11533,1473,1,100,N,N,N,CP_Phys,TT_Task,DT_FixedDrtn,RV_OK,TK_Complete,A102,Concrete Screed,2969,,,0,49,0,49,9,0,0,0,,2013-03-17 00:00,2013-03-18 00:00,2013-05-26 15:00,2013-05-26 15:00,,2013-04-23 07:00,2013-04-23 07:00,,,2013-04-23 07:00,2013-04-23 16:00,,,,,PT_Normal,,,,,pElnXAaqN02X5BPHXBnoBQ,4/pGUroMR1iRSZJ3JTy9MA,,,N,49,0,,,2013-06-23 13:00,2013-06-23 13:00,admin,admin
265,85350,1346,11533,1473,1,0,N,N,N,CP_Phys,TT_Task,DT_FixedDrtn,RV_OK,TK_NotStart,A107,Completion of Raft Foundations for Pier 1 - WB & EB,,238,238,8,0,0,0,8,0,0,0,,,,2013-06-04 13:00,2013-06-05 11:00,,2013-05-01 15:00,2013-05-04 13:00,2013-05-01 15:00,2013-05-04 13:00,2013-05-01 15:00,2013-05-04 13:00,,2013-06-04 13:00,2013-06-05 11:00,,PT_Normal,,,,,PLWdaXPnaUK6vOGq8f1SpQ,JMHfwmyQRDqI7jlQhi1I9A,,,N,0,0,,,2013-06-23 13:00,2013-06-23 13:00,admin,admin
266,85351,1346,11533,1473,1,100,N,N,N,CP_Phys,TT_Task,DT_FixedDrtn,RV_OK,TK_Complete,A90,Plate Load Testing & Submission of Reports,,,,0,0,0,0,40,0,0,0,,2013-02-27 00:00,2013-03-05 00:00,2013-05-26 15:00,2013-05-26 15:00,,2013-04-23 00:00,2013-04-23 00:00,,,2013-05-05 07:00,2013-05-08 17:00,,,,,PT_Normal,,,,,sgr3ZiDurkWoXOHQkEWkBA,YRnlGJu2Q+SFyP29pUCZyw,,,N,0,0,,,2013-06-23 13:00,2013-06-23 13:00,admin,admin
267,85352,1346,11547,1473,1,0,N,N,N,CP_Phys,TT_Task,DT_FixedDrtn,RV_OK,TK_NotStart,A178,Erection of Scaffolding for Pier - Lift 1,3002,0,0,9,0,69,69,9,8,0,8,,,,2013-06-19 10:00,2013-06-22 09:00,,2013-06-19 10:00,2013-06-22 09:00,2013-06-19 10:00,2013-06-22 09:00,2013-06-19 10:00,2013-06-22 09:00,,2013-06-19 10:00,2013-06-22 09:00,,PT_Normal,,,,,1QNAzk+THkeZ6ptbQV3M+A,n1C8+N8CQ7S4m7rAFsq/Fg,,,Y,0,0,,,2013-06-23 13:00,2013-06-23 13:00,admin,admin
268,85353,1346,11547,1473,1,0,N,N,N,CP_Phys,TT_Task,DT_FixedDrtn,RV_OK,TK_NotStart,A179,Reinforcement Fixing for Pier - Lift 1,2971,0,0,18,0,236,236,18,18,0,18,,,,2013-06-22 09:00,2013-06-23 17:00,,2013-06-22 09:00,2013-06-23 17:00,2013-06-22 09:00,2013-06-23 17:00,2013-06-22 09:00,2013-06-23 17:00,,2013-06-22 09:00,2013-06-23 17:00,,PT_Normal,,,,,PlIc9Gt/sk+AkRxQ5W8auA,m7ge3KDuQAexh0AMhh+kNg,,,Y,0,0,,,2013-06-23 13:00,2013-06-23 13:00,admin,admin
269,85354,1346,11547,1473,1,0,N,N,N,CP_Phys,TT_Task,DT_FixedDrtn,RV_OK,TK_NotStart,A182,Erection of Scaffolding for Pier - Lift 2,3002,0,0,9,0,93,93,9,8,0,8,,,,2013-06-25 15:00,2013-06-26 14:00,,2013-06-25 15:00,2013-06-26 14:00,2013-06-25 15:00,2013-06-26 14:00,2013-06-25 15:00,2013-06-26 14:00,,2013-06-25 15:00,2013-06-26 14:00,,PT_Normal,,,,,nJbblFBHLE2TgpU72uD8BQ,HNnzFVffQHaVnxbV5KY5hQ,,,Y,0,0,,,2013-06-23 13:00,2013-06-23 13:00,admin,admin
270,85355,1346,11547,1473,1,0,N,N,N,CP_Phys,TT_Task,DT_FixedDrtn,RV_OK,TK_NotStart,A183,Reinforcement Fixing for Pier - Lift 2,2971,0,0,18,0,254,254,18,27,0,27,,,,2013-06-26 14:00,2013-06-30 12:00,,2013-06-26 14:00,2013-06-30 12:00,2013-06-26 14:00,2013-06-30 12:00,2013-06-26 14:00,2013-06-30 12:00,,2013-06-26 14:00,2013-06-30 12:00,,PT_Normal,,,,,6vQNTrah6kqCO+SGCdA9Vw,E0Q4CzrsS6Gh3NTpNan8Zw,,,Y,0,0,,,2013-06-23 13:00,2013-06-23 13:00,admin,admin
271,85356,1346,11547,1473,1,0,N,N,N,CP_Phys,TT_Task,DT_FixedDrtn,RV_OK,TK_NotStart,A184,Formwork for Pier - Lift 2,2980,0,0,9,0,77,77,9,8,0,8,,,,2013-06-30 12:00,2013-07-01 11:00,,2013-06-30 12:00,2013-07-01 11:00,2013-06-30 12:00,2013-07-01 11:00,2013-06-30 12:00,2013-07-01 11:00,,2013-06-30 12:00,2013-07-01 11:00,,PT_Normal,,,,,NdIJSjQTpk6Z/J5jnJ9kmA,z56LQ9x5SNCgaIfj3PqG7g,,,Y,0,0,,,2013-06-23 13:00,2013-06-23 13:00,admin,admin
272,85357,1346,11547,1473,1,0,N,N,N,CP_Phys,TT_Task,DT_FixedDrtn,RV_OK,TK_NotStart,A185,Concreting for Pier - Lift 2,2969,0,0,9,0,98,98,9,42,0,42,,,,2013-07-01 11:00,2013-07-02 10:00,,2013-07-01 11:00,2013-07-02 10:00,2013-07-01 11:00,2013-07-02 10:00,2013-07-01 11:00,2013-07-02 10:00,,2013-07-01 11:00,2013-07-02 10:00,,PT_Normal,,,,,xLvLvxIXDkmZ2luxRIj+hA,1MHJ6DfPSsy7CkdW1KDg2g,,,Y,0,0,,,2013-06-23 13:00,2013-06-23 13:00,admin,admin
273,85358,1346,11547,1473,1,0,N,N,N,CP_Phys,TT_Task,DT_FixedDrtn,RV_OK,TK_NotStart,A186,Erection of Scaffolding for Pier - Lift 3,3002,18,0,9,0,106,106,9,8,0,8,,,,2013-07-06 08:00,2013-07-06 17:00,,2013-07-02 10:00,2013-07-03 09:00,2013-07-02 10:00,2013-07-03 09:00,2013-07-02 10:00,2013-07-03 09:00,,2013-07-06 08:00,2013-07-06 17:00,,PT_Normal,,,,,9b4FDDgThk6DT7m/6+tPpA,bX+7ldUMRUiM3TDn3Mh8xg,,,N,0,0,,,2013-06-23 13:00,2013-06-23 13:00,admin,admin
274,85359,1346,11547,1473,1,0,N,N,N,CP_Phys,TT_Task,DT_FixedDrtn,RV_OK,TK_NotStart,A187,Reinforcement Fixing for Pier - Lift 3,2971,18,0,9,0,116,116,9,8,0,8,,,,2013-07-07 07:00,2013-07-07 16:00,,2013-07-03 09:00,2013-07-06 08:00,2013-07-03 09:00,2013-07-06 08:00,2013-07-03 09:00,2013-07-06 08:00,,2013-07-07 07:00,2013-07-07 16:00,,PT_Normal,,,,,fofVHtCLJ0Kd3ND3Lo2mog,T1Y1LVLIRs2Zrx/UxGqq2g,,,N,0,0,,,2013-06-23 13:00,2013-06-23 13:00,admin,admin
275,85360,1346,11547,1473,1,0,N,N,N,CP_Phys,TT_Task,DT_FixedDrtn,RV_OK,TK_NotStart,A188,Formwork for Pier - Lift 3,2980,18,0,9,0,77,77,9,8,0,8,,,,2013-07-07 16:00,2013-07-08 15:00,,2013-07-06 08:00,2013-07-06 17:00,2013-07-06 08:00,2013-07-06 17:00,2013-07-06 08:00,2013-07-06 17:00,,2013-07-07 16:00,2013-07-08 15:00,,PT_Normal,,,,,qsut/r4HR0+13mOTY27yZw,L0P5hHXWQnyOE8MzZ/Lphw,,,N,0,0,,,2013-06-23 13:00,2013-06-23 13:00,admin,admin
276,85361,1346,11547,1473,1,0,N,N,N,CP_Phys,TT_Task,DT_FixedDrtn,RV_OK,TK_NotStart,A189,Concreting for Pier - Lift 3,2969,18,0,9,0,98,98,9,44,0,44,,,,2013-07-08 15:00,2013-07-09 14:00,,2013-07-07 07:00,2013-07-07 16:00,2013-07-07 07:00,2013-07-07 16:00,2013-07-07 07:00,2013-07-07 16:00,,2013-07-08 15:00,2013-07-09 14:00,,PT_Normal,,,,,CFv60N3vjEqDLhuE62fULg,oR1bW2aBRn+pDUGYyhqKOg,,,N,0,0,,,2013-06-23 13:00,2013-06-23 13:00,admin,admin
277,85362,1346,11547,1473,1,0,N,N,N,CP_Phys,TT_Task,DT_FixedDrtn,RV_OK,TK_NotStart,A177,Setting Out  for Pier,2971,0,0,9,0,27,27,9,9,0,9,,,,2013-06-18 11:00,2013-06-19 10:00,,2013-06-18 11:00,2013-06-19 10:00,2013-06-18 11:00,2013-06-19 10:00,2013-06-18 11:00,2013-06-19 10:00,,2013-06-18 11:00,2013-06-19 10:00,,PT_Normal,,,,,nMw1XgDTNUaei+XDkkgU1w,UTDClmjFT3G9CMNzZCTXMw,,,Y,0,0,,,2013-06-23 13:00,2013-06-23 13:00,admin,admin
278,85363,1346,11547,1473,1,0,N,N,N,CP_Phys,TT_Task,DT_FixedDrtn,RV_OK,TK_NotStart,A174,Reinforcement Cutting & Bending for Pier - Lift 1,2970,120,0,36,0,756,756,36,36,0,36,,,,2013-06-10 15:00,2013-06-16 11:00,,2013-05-25 15:00,2013-05-29 11:00,2013-05-25 15:00,2013-05-29 11:00,2013-05-25 15:00,2013-05-29 11:00,,2013-06-10 15:00,2013-06-16 11:00,,PT_Normal,,,,,aLcyCHDC1UigVloVIuMwSw,fYZRQHwIRAy6bIJotoy1pw,,,N,0,0,,,2013-06-23 13:00,2013-06-23 13:00,admin,admin
279,85364,1346,11547,1473,1,0,N,N,N,CP_Phys,TT_Task,DT_FixedDrtn,RV_OK,TK_NotStart,A175,Reinforcement Cutting & Bending for Pier - Lift 2,2970,120,0,36,0,756,756,36,36,0,36,,,,2013-06-12 15:00,2013-06-18 11:00,,2013-05-27 15:00,2013-06-02 11:00,2013-05-27 15:00,2013-06-02 11:00,2013-05-27 15:00,2013-06-02 11:00,,2013-06-12 15:00,2013-06-18 11:00,,PT_Normal,,,,,3UXPRS1g0U+qZWa65cHGFw,7yGK/VecS/G1+kAVN2X9Zg,,,N,0,0,,,2013-06-23 13:00,2013-06-23 13:00,admin,admin
280,85365,1346,11547,1473,1,0,N,N,N,CP_Phys,TT_Task,DT_FixedDrtn,RV_OK,TK_NotStart,A176,Reinforcement Cutting & Bending for Pier - Lift 3,2970,120,0,36,0,756,756,36,36,0,36,,,,2013-06-16 15:00,2013-06-22 11:00,,2013-05-29 15:00,2013-06-04 11:00,2013-05-29 15:00,2013-06-04 11:00,2013-05-29 15:00,2013-06-04 11:00,,2013-06-16 15:00,2013-06-22 11:00,,PT_Normal,,,,,mSlnm7MhuUSIfpmwqUjr6A,hdZnsGp1SvSdxfqRex0UEw,,,N,0,0,,,2013-06-23 13:00,2013-06-23 13:00,admin,admin
281,85366,1346,11547,1473,1,0,N,N,N,CP_Phys,TT_Task,DT_FixedDrtn,RV_OK,TK_NotStart,A190,Removal of Formwork for Pier,2980,18,0,18,0,174,174,18,27,0,27,,,,2013-07-09 14:00,2013-07-13 12:00,,2013-07-07 16:00,2013-07-09 14:00,2013-07-07 16:00,2013-07-09 14:00,2013-07-07 16:00,2013-07-09 14:00,,2013-07-09 14:00,2013-07-13 12:00,,PT_Normal,,,,,1iVVzwEQ8UOccUK9vGavAQ,fpb4hCzgQCq4OF9gQPP0lA,,,N,0,0,,,2013-06-23 13:00,2013-06-23 13:00,admin,admin
282,85367,1346,11547,1473,1,0,N,N,N,CP_Phys,TT_Task,DT_FixedDrtn,RV_OK,TK_NotStart,A191,Dismantling of Complete Pier Scaffolding,3002,112,0,9,0,98,98,9,9,0,9,,,,2013-07-24 16:00,2013-07-27 15:00,,2013-07-09 14:00,2013-07-10 13:00,2013-07-09 14:00,2013-07-10 13:00,2013-07-09 14:00,2013-07-10 13:00,,2013-07-24 16:00,2013-07-27 15:00,,PT_Normal,,,,,aXCXOynJ4ku7DTvaKaWp5w,lOZ6+hXoTmmoMFDKEIQGiQ,,,N,0,0,,,2013-06-23 13:00,2013-06-23 13:00,admin,admin
283,85368,1346,11547,1473,1,0,N,N,N,CP_Phys,TT_Task,DT_FixedDrtn,RV_OK,TK_NotStart,A192,"Application of Primer, Water Proofing Membrane & Protection Board",2971,112,0,20,0,80,80,20,0,0,0,,,,2013-07-27 15:00,2013-07-29 15:00,,2013-07-10 13:00,2013-07-14 13:00,2013-07-10 13:00,2013-07-14 13:00,2013-07-10 13:00,2013-07-14 13:00,,2013-07-27 15:00,2013-07-29 15:00,,PT_Normal,,,,,foQtnxkvok+1vFdMQA7QoA,cgNxUMPtRRakBnCB+Zt3iQ,,,N,0,0,,,2013-06-23 13:00,2013-06-23 13:00,admin,admin
284,85369,1346,11547,1473,1,0,N,N,N,CP_Phys,TT_Task,DT_FixedDrtn,RV_OK,TK_NotStart,A193,Application of Bitumen Mastic,2971,112,0,9,0,27,27,9,0,0,0,,,,2013-07-29 15:00,2013-07-30 14:00,,2013-07-14 13:00,2013-07-15 12:00,2013-07-14 13:00,2013-07-15 12:00,2013-07-14 13:00,2013-07-15 12:00,,2013-07-29 15:00,2013-07-30 14:00,,PT_Normal,,,,,DriboiYL0UO5bAmo3z7erw,Kg9bFZXIQeCxYag1VcSPiA,,,N,0,0,,,2013-06-23 13:00,2013-06-23 13:00,admin,admin
285,85370,1346,11547,1473,1,0,N,N,N,CP_Phys,TT_Task,DT_FixedDrtn,RV_OK,TK_NotStart,A194,Concrete Screed for Balance Portion of PCC,2971,112,0,9,0,27,27,9,0,0,0,,,,2013-07-29 15:00,2013-07-30 14:00,,2013-07-14 13:00,2013-07-15 12:00,2013-07-14 13:00,2013-07-15 12:00,2013-07-14 13:00,2013-07-15 12:00,,2013-07-29 15:00,2013-07-30 14:00,,PT_Normal,,,,,433zEFrgkEScheenGFY5Hg,TKHMgpSARCyYfVw3gmnKnw,,,N,0,0,,,2013-06-23 13:00,2013-06-23 13:00,admin,admin
286,85371,1346,11547,1473,1,0,N,N,N,CP_Phys,TT_Task,DT_FixedDrtn,RV_OK,TK_NotStart,A195,Completion of Pier Construction 1 - WB - B,,112,0,8,0,0,0,8,0,0,0,,,,2013-07-29 16:00,2013-07-30 14:00,,2013-07-14 14:00,2013-07-15 12:00,2013-07-14 14:00,2013-07-15 12:00,2013-07-14 14:00,2013-07-15 12:00,,2013-07-29 16:00,2013-07-30 14:00,,PT_Normal,,,,,3907TkJfxUOBT1q3UZfK/w,Inj12knAQuemX6V3p8ge9w,,,N,0,0,,,2013-06-23 13:00,2013-06-23 13:00,admin,admin
287,85372,1346,11547,1473,1,0,N,N,N,CP_Phys,TT_Task,DT_FixedDrtn,RV_OK,TK_NotStart,A181,Concreting for Pier - Lift 1,2969,0,0,9,0,96,96,9,42,0,42,,,,2013-06-24 16:00,2013-06-25 15:00,,2013-06-24 16:00,2013-06-25 15:00,2013-06-24 16:00,2013-06-25 15:00,2013-06-24 16:00,2013-06-25 15:00,,2013-06-24 16:00,2013-06-25 15:00,,PT_Normal,,,,,33EfbUSCQ0OL2MbQY7SPlQ,ZHsb34JmTNSvm+PCt0MrvA,,,Y,0,0,,,2013-06-23 13:00,2013-06-23 13:00,admin,admin
288,85373,1346,11547,1473,1,0,N,N,N,CP_Phys,TT_Task,DT_FixedDrtn,RV_OK,TK_NotStart,A180,Formwork for Pier - Lift 1,2980,0,0,9,0,68,68,9,8,0,8,,,,2013-06-24 07:00,2013-06-24 16:00,,2013-06-24 07:00,2013-06-24 16:00,2013-06-24 07:00,2013-06-24 16:00,2013-06-24 07:00,2013-06-24 16:00,,2013-06-24 07:00,2013-06-24 16:00,,PT_Normal,,,,,Zn+kfgHuwUmgL6S3+uoIbA,M27aTMNbRmec4P6KYRNU+w,,,Y,0,0,,,2013-06-23 13:00,2013-06-23 13:00,admin,admin
289,85374,1346,11513,1473,1,0,N,N,N,CP_Phys,TT_Task,DT_FixedDrtn,RV_OK,TK_NotStart,A156,Erection of Scaffolding for Pier - Lift 1,3002,0,0,9,0,77,77,9,8,0,8,,,,2013-06-08 10:00,2013-06-09 09:00,,2013-06-08 10:00,2013-06-09 09:00,2013-06-08 10:00,2013-06-09 09:00,2013-06-08 10:00,2013-06-09 09:00,,2013-06-08 10:00,2013-06-09 09:00,,PT_Normal,,,,,WKf4wtN16UK1ElaAJPQ48Q,L9zmMreOSL++ltXzCMgnAg,,,Y,0,0,,,2013-06-23 13:00,2013-06-23 13:00,admin,admin
290,85375,1346,11513,1473,1,0,N,N,N,CP_Phys,TT_Task,DT_FixedDrtn,RV_OK,TK_NotStart,A157,Reinforcement Fixing for Pier - Lift 1,2971,0,0,18,0,240,240,18,20,0,20,,,,2013-06-09 09:00,2013-06-10 17:00,,2013-06-09 09:00,2013-06-10 17:00,2013-06-09 09:00,2013-06-10 17:00,2013-06-09 09:00,2013-06-10 17:00,,2013-06-09 09:00,2013-06-10 17:00,,PT_Normal,,,,,Ris7ISU++EiS0r47sQo/Lg,Z1uKpqPkS2Wx7FcqfkEY3Q,,,Y,0,0,,,2013-06-23 13:00,2013-06-23 13:00,admin,admin
291,85376,1346,11513,1473,1,0,N,N,N,CP_Phys,TT_Task,DT_FixedDrtn,RV_OK,TK_NotStart,A160,Erection of Scaffolding for Pier - Lift 2,3002,0,0,9,0,93,93,9,8,0,8,,,,2013-06-12 15:00,2013-06-15 14:00,,2013-06-12 15:00,2013-06-15 14:00,2013-06-12 15:00,2013-06-15 14:00,2013-06-12 15:00,2013-06-15 14:00,,2013-06-12 15:00,2013-06-15 14:00,,PT_Normal,,,,,+uiF6qg2+0OU2kbVtd10Bw,U+T/fwahQa2QGzpa2fdioA,,,Y,0,0,,,2013-06-23 13:00,2013-06-23 13:00,admin,admin
292,85377,1346,11513,1473,1,0,N,N,N,CP_Phys,TT_Task,DT_FixedDrtn,RV_OK,TK_NotStart,A161,Reinforcement Fixing for Pier - Lift 2,2971,0,0,18,0,254,254,18,27,0,27,,,,2013-06-15 14:00,2013-06-17 12:00,,2013-06-15 14:00,2013-06-17 12:00,2013-06-15 14:00,2013-06-17 12:00,2013-06-15 14:00,2013-06-17 12:00,,2013-06-15 14:00,2013-06-17 12:00,,PT_Normal,,,,,5ayA+7td0EutecehDIgDRA,YUIOCNjlTy+SFijYF4NQcw,,,Y,0,0,,,2013-06-23 13:00,2013-06-23 13:00,admin,admin
293,85378,1346,11513,1473,1,0,N,N,N,CP_Phys,TT_Task,DT_FixedDrtn,RV_OK,TK_NotStart,A162,Formwork for Pier - Lift 2,2980,0,0,9,0,68,68,9,8,0,8,,,,2013-06-17 12:00,2013-06-18 11:00,,2013-06-17 12:00,2013-06-18 11:00,2013-06-17 12:00,2013-06-18 11:00,2013-06-17 12:00,2013-06-18 11:00,,2013-06-17 12:00,2013-06-18 11:00,,PT_Normal,,,,,B26+18eJuUqjMEc3taKYzg,NgsRogXzSkyj4H6VqElAaQ,,,Y,0,0,,,2013-06-23 13:00,2013-06-23 13:00,admin,admin
294,85379,1346,11513,1473,1,0,N,N,N,CP_Phys,TT_Task,DT_FixedDrtn,RV_OK,TK_NotStart,A163,Concreting for Pier - Lift 2,2969,0,0,9,0,78,78,9,42,0,42,,,,2013-06-18 11:00,2013-06-19 10:00,,2013-06-18 11:00,2013-06-19 10:00,2013-06-18 11:00,2013-06-19 10:00,2013-06-18 11:00,2013-06-19 10:00,,2013-06-18 11:00,2013-06-19 10:00,,PT_Normal,,,,,WH5vv13rJ02Si1s0t9SPHA,r5MTrJjQSlqwxfJpqYub+g,,,Y,0,0,,,2013-06-23 13:00,2013-06-23 13:00,admin,admin
295,85380,1346,11513,1473,1,0,N,N,N,CP_Phys,TT_Task,DT_FixedDrtn,RV_OK,TK_NotStart,A164,Erection of Scaffolding for Pier - Lift 3,3002,18,0,9,0,106,106,9,8,0,8,,,,2013-06-23 08:00,2013-06-23 17:00,,2013-06-19 10:00,2013-06-22 09:00,2013-06-19 10:00,2013-06-22 09:00,2013-06-19 10:00,2013-06-22 09:00,,2013-06-23 08:00,2013-06-23 17:00,,PT_Normal,,,,,Goq/r5QTfUmMyaqtAqHr4A,r/cVtl8uRF+AAkQgB/6jRQ,,,N,0,0,,,2013-06-23 13:00,2013-06-23 13:00,admin,admin
296,85381,1346,11513,1473,1,0,N,N,N,CP_Phys,TT_Task,DT_FixedDrtn,RV_OK,TK_NotStart,A165,Reinforcement Fixing for Pier - Lift 3,2971,18,0,9,0,116,116,9,8,0,8,,,,2013-06-24 07:00,2013-06-24 16:00,,2013-06-22 09:00,2013-06-23 08:00,2013-06-22 09:00,2013-06-23 08:00,2013-06-22 09:00,2013-06-23 08:00,,2013-06-24 07:00,2013-06-24 16:00,,PT_Normal,,,,,3bFVkcxZ00+/apguKSWLhQ,bvdldgQkRJynevtTNFnxcg,,,N,0,0,,,2013-06-23 13:00,2013-06-23 13:00,admin,admin
297,85382,1346,11513,1473,1,0,N,N,N,CP_Phys,TT_Task,DT_FixedDrtn,RV_OK,TK_NotStart,A166,Formwork for Pier - Lift 3,2980,18,0,9,0,77,77,9,8,0,8,,,,2013-06-24 16:00,2013-06-25 15:00,,2013-06-23 08:00,2013-06-23 17:00,2013-06-23 08:00,2013-06-23 17:00,2013-06-23 08:00,2013-06-23 17:00,,2013-06-24 16:00,2013-06-25 15:00,,PT_Normal,,,,,YTyhKEypsUevKGLzGiUAqg,N7lk62tMRbSpnN8fHlG9yQ,,,N,0,0,,,2013-06-23 13:00,2013-06-23 13:00,admin,admin
298,85383,1346,11513,1473,1,0,N,N,N,CP_Phys,TT_Task,DT_FixedDrtn,RV_OK,TK_NotStart,A167,Concreting for Pier - Lift 3,2969,18,0,9,0,98,98,9,44,0,44,,,,2013-06-25 15:00,2013-06-26 14:00,,2013-06-24 07:00,2013-06-24 16:00,2013-06-24 07:00,2013-06-24 16:00,2013-06-24 07:00,2013-06-24 16:00,,2013-06-25 15:00,2013-06-26 14:00,,PT_Normal,,,,,MUHEKgjeaEqXlN5alc751w,JAmiVPjuQSeivZeSLWh3sA,,,N,0,0,,,2013-06-23 13:00,2013-06-23 13:00,admin,admin
299,85384,1346,11513,1473,1,0,N,N,N,CP_Phys,TT_Task,DT_FixedDrtn,RV_OK,TK_NotStart,A155,Setting Out  for Pier,2971,0,0,9,0,27,27,9,9,0,9,,,,2013-06-05 11:00,2013-06-08 10:00,,2013-06-05 11:00,2013-06-08 10:00,2013-06-05 11:00,2013-06-08 10:00,2013-06-05 11:00,2013-06-08 10:00,,2013-06-05 11:00,2013-06-08 10:00,,PT_Normal,,,,,xTF99xu0+0SQi0KLt8qDLg,H0pDNl6TTne1avm78840uA,,,Y,0,0,,,2013-06-23 13:00,2013-06-23 13:00,admin,admin
300,85385,1346,11513,1473,1,0,N,N,N,CP_Phys,TT_Task,DT_FixedDrtn,RV_OK,TK_NotStart,A152,Reinforcement Cutting & Bending for Pier - Lift 1,2970,120,0,36,0,756,756,36,80,0,80,,,,2013-06-01 09:00,2013-06-04 15:00,,2013-05-14 09:00,2013-05-19 15:00,2013-05-14 09:00,2013-05-19 15:00,2013-05-14 09:00,2013-05-19 15:00,,2013-06-01 09:00,2013-06-04 15:00,,PT_Normal,,,,,Q3s3OsluWk+Zc5wR8uT7EQ,Z/jDgANYQSKNHdmga9Wfew,,,N,0,0,,,2013-06-23 13:00,2013-06-23 13:00,admin,admin
301,85386,1346,11513,1473,1,0,N,N,N,CP_Phys,TT_Task,DT_FixedDrtn,RV_OK,TK_NotStart,A153,Reinforcement Cutting & Bending for Pier - Lift 2,2970,120,0,36,0,756,756,36,80,0,80,,,,2013-06-03 09:00,2013-06-08 15:00,,2013-05-18 09:00,2013-05-21 15:00,2013-05-18 09:00,2013-05-21 15:00,2013-05-18 09:00,2013-05-21 15:00,,2013-06-03 09:00,2013-06-08 15:00,,PT_Normal,,,,,PYfHWDttp0ulM45ElXaleA,4uDGlZ3LQLuMMiDVXKGhEw,,,N,0,0,,,2013-06-23 13:00,2013-06-23 13:00,admin,admin
302,85387,1346,11513,1473,1,0,N,N,N,CP_Phys,TT_Task,DT_FixedDrtn,RV_OK,TK_NotStart,A154,Reinforcement Cutting & Bending for Pier - Lift 3,2970,120,0,36,0,756,756,36,80,0,80,,,,2013-06-05 09:00,2013-06-10 15:00,,2013-05-20 09:00,2013-05-25 15:00,2013-05-20 09:00,2013-05-25 15:00,2013-05-20 09:00,2013-05-25 15:00,,2013-06-05 09:00,2013-06-10 15:00,,PT_Normal,,,,,gSNeUyEyUU6jffx0zdmQdA,6ZjN2DePRnyEOXtB4QgaNg,,,N,0,0,,,2013-06-23 13:00,2013-06-23 13:00,admin,admin
303,85388,1346,11513,1473,1,0,N,N,N,CP_Phys,TT_Task,DT_FixedDrtn,RV_OK,TK_NotStart,A168,Removal of Formwork for Pier,2980,18,0,18,0,174,174,18,27,0,27,,,,2013-06-26 14:00,2013-06-30 12:00,,2013-06-24 16:00,2013-06-26 14:00,2013-06-24 16:00,2013-06-26 14:00,2013-06-24 16:00,2013-06-26 14:00,,2013-06-26 14:00,2013-06-30 12:00,,PT_Normal,,,,,WDykL+FWKE2U9IfwhO4XLg,CprjhjeaSvK79NuT8meoqA,,,N,0,0,,,2013-06-23 13:00,2013-06-23 13:00,admin,admin
304,85389,1346,11513,1473,1,0,N,N,N,CP_Phys,TT_Task,DT_FixedDrtn,RV_OK,TK_NotStart,A169,Dismantling of Complete Pier Scaffolding,2980,131,19,80,0,871.111112,871.111112,80,80,0,80,,,,2013-07-15 15:00,2013-07-27 15:00,,2013-06-26 14:00,2013-07-08 14:00,2013-06-26 14:00,2013-07-08 14:00,2013-06-26 14:00,2013-07-08 14:00,,2013-07-15 15:00,2013-07-27 15:00,,PT_Normal,,,,,+2/2b5wUhkKDduwrfg9ybQ,A2RxqD1uRMSLQCIdG0Y9kw,,,N,0,0,,,2013-06-23 13:00,2013-06-23 13:00,admin,admin
305,85390,1346,11513,1473,1,0,N,N,N,CP_Phys,TT_Task,DT_FixedDrtn,RV_OK,TK_NotStart,A170,"Application of Primer, Water Proofing Membrane & Protection Board",2971,112,0,20,0,80,80,20,0,0,0,,,,2013-07-27 15:00,2013-07-29 15:00,,2013-07-10 13:00,2013-07-14 13:00,2013-07-10 13:00,2013-07-14 13:00,2013-07-10 13:00,2013-07-14 13:00,,2013-07-27 15:00,2013-07-29 15:00,,PT_Normal,,,,,uH5bMZxCC0yrziZz1KHm/g,WWTKbaQMT56aczp9Kz/NUg,,,N,0,0,,,2013-06-23 13:00,2013-06-23 13:00,admin,admin
306,85391,1346,11513,1473,1,0,N,N,N,CP_Phys,TT_Task,DT_FixedDrtn,RV_OK,TK_NotStart,A171,Application of Bitumen Mastic,2971,112,0,9,0,27,27,9,0,0,0,,,,2013-07-29 15:00,2013-07-30 14:00,,2013-07-14 13:00,2013-07-15 12:00,2013-07-14 13:00,2013-07-15 12:00,2013-07-14 13:00,2013-07-15 12:00,,2013-07-29 15:00,2013-07-30 14:00,,PT_Normal,,,,,Rn0nCC032E6KU16Qt5lELA,M5vRluQKRUa8/Cxgmhk0Fw,,,N,0,0,,,2013-06-23 13:00,2013-06-23 13:00,admin,admin
307,85392,1346,11513,1473,1,0,N,N,N,CP_Phys,TT_Task,DT_FixedDrtn,RV_OK,TK_NotStart,A172,Concrete Screed for Balance Portion of PCC,2971,112,0,9,0,27,27,9,0,0,0,,,,2013-07-29 15:00,2013-07-30 14:00,,2013-07-14 13:00,2013-07-15 12:00,2013-07-14 13:00,2013-07-15 12:00,2013-07-14 13:00,2013-07-15 12:00,,2013-07-29 15:00,2013-07-30 14:00,,PT_Normal,,,,,vuF5fIfhHEOs4wwQut5zMw,7HXBTuwLSSuvi/N2+msZNw,,,N,0,0,,,2013-06-23 13:00,2013-06-23 13:00,admin,admin
308,85393,1346,11513,1473,1,0,N,N,N,CP_Phys,TT_Task,DT_FixedDrtn,RV_OK,TK_NotStart,A173,Completion of Pier Construction 1 - WB - A,,112,0,8,0,0,0,8,0,0,0,,,,2013-07-29 16:00,2013-07-30 14:00,,2013-07-14 14:00,2013-07-15 12:00,2013-07-14 14:00,2013-07-15 12:00,2013-07-14 14:00,2013-07-15 12:00,,2013-07-29 16:00,2013-07-30 14:00,,PT_Normal,,,,,pyGi7ozUyU6kiO8mqZYl2A,Iv5oTJTGRYGnzx1omYYdSQ,,,N,0,0,,,2013-06-23 13:00,2013-06-23 13:00,admin,admin
309,85394,1346,11513,1473,1,0,N,N,N,CP_Phys,TT_Task,DT_FixedDrtn,RV_OK,TK_NotStart,A159,Concreting for Pier - Lift 1,2969,0,0,9,0,96,96,9,42,0,42,,,,2013-06-11 16:00,2013-06-12 15:00,,2013-06-11 16:00,2013-06-12 15:00,2013-06-11 16:00,2013-06-12 15:00,2013-06-11 16:00,2013-06-12 15:00,,2013-06-11 16:00,2013-06-12 15:00,,PT_Normal,,,,,cMZPZFMilkO3l6CVDIm/Ow,q3GJ8KY1Qx2OkTg6NcQGJw,,,Y,0,0,,,2013-06-23 13:00,2013-06-23 13:00,admin,admin
310,85395,1346,11513,1473,1,0,N,N,N,CP_Phys,TT_Task,DT_FixedDrtn,RV_OK,TK_NotStart,A158,Formwork for Pier - Lift 1,2980,0,0,9,0,85,85,9,8,0,8,,,,2013-06-11 07:00,2013-06-11 16:00,,2013-06-11 07:00,2013-06-11 16:00,2013-06-11 07:00,2013-06-11 16:00,2013-06-11 07:00,2013-06-11 16:00,,2013-06-11 07:00,2013-06-11 16:00,,PT_Normal,,,,,xqiWtirPGUa3ZO/oCTt8uQ,3oFk4HgrSF6k4DzajdfB4g,,,Y,0,0,,,2013-06-23 13:00,2013-06-23 13:00,admin,admin
311,85396,1346,11522,1473,1,100,N,N,N,CP_Phys,TT_Task,DT_FixedDrtn,RV_OK,TK_Complete,A48,MIR for Concrete 30/20,,,,0,0,0,0,20,0,0,0,,2013-01-29 00:00,2013-02-02 00:00,2013-05-11 10:00,2013-05-11 10:00,,2013-04-23 00:00,2013-04-23 00:00,,,2013-04-23 07:00,2013-04-24 17:00,,,,,PT_Normal,,,,,SMXyz4ctYUCiidy155JmHw,RC/8a9YQ5EO5lwGvI4vH0A,,,N,0,0,,,2013-06-23 13:00,2013-06-23 13:00,admin,admin
312,85397,1346,11522,1473,1,100,N,N,N,CP_Phys,TT_Task,DT_FixedDrtn,RV_OK,TK_Complete,A20,MAR for Concrete 30/20,,,,0,0,0,0,220,0,0,0,,2013-01-19 00:00,2013-03-19 00:00,2013-05-11 10:00,2013-05-11 10:00,,2013-04-23 00:00,2013-04-23 00:00,,,2012-12-17 07:00,2013-01-15 17:00,,,,,PT_Normal,,,,,oK7agadx0Ee0pvD2MpPlgw,lwwXwWZPmESONqtH268EeA,,,N,0,0,,,2013-06-23 13:00,2013-06-23 13:00,admin,admin
313,85398,1346,11522,1474,1,100,N,N,N,CP_Phys,TT_Task,DT_FixedDrtn,RV_OK,TK_Complete,A35,Procurment  for Concrete 30/20,,,,0,0,0,0,20,0,0,0,,2013-01-27 00:00,2013-01-29 00:00,2013-05-11 10:00,2013-05-11 10:00,,2013-04-23 00:00,2013-04-23 00:00,,,2013-04-23 07:00,2013-04-24 17:00,,,,,PT_Normal,,,,,kFAiVs6qykm0e+QVYzv+Mw,yPbWPs5BdUiwxt6hHSGW2A,,,N,0,0,,,2013-06-23 13:00,2013-06-23 13:00,admin,admin
314,85399,1346,11522,1473,1,100,N,N,N,CP_Phys,TT_Task,DT_FixedDrtn,RV_OK,TK_Complete,A54,MIR for Cement,,,,0,0,0,0,20,0,0,0,,2013-02-05 00:00,2013-02-09 00:00,2013-05-11 10:00,2013-05-11 10:00,,2013-04-23 00:00,2013-04-23 00:00,,,2013-04-23 07:00,2013-04-24 17:00,,,,,PT_Normal,,,,,ddpqYcZZd0SvtspVcJqdMg,P27ltIzUTkC5EP7NC0qIHA,,,N,0,0,,,2013-06-23 13:00,2013-06-23 13:00,admin,admin
315,85400,1346,11522,1473,1,100,N,N,N,CP_Phys,TT_Task,DT_FixedDrtn,RV_OK,TK_Complete,A21,MAR for Cement,,,,0,0,0,0,220,0,0,0,,2013-01-27 00:00,2013-02-27 00:00,2013-05-11 10:00,2013-05-11 10:00,,2013-04-23 00:00,2013-04-23 00:00,,,2012-12-17 07:00,2013-01-15 17:00,,,,,PT_Normal,,,,,pXKPNPGpmUmI3Mh5Tv7Krg,f7KHpbjDckmS11Lg1SRlEQ,,,N,0,0,,,2013-06-23 13:00,2013-06-23 13:00,admin,admin
316,85401,1346,11522,1474,1,100,N,N,N,CP_Phys,TT_Task,DT_FixedDrtn,RV_OK,TK_Complete,A36,Procurment  for Cement,,,,0,0,0,0,40,0,0,0,,2013-01-27 00:00,2013-01-29 00:00,2013-05-11 10:00,2013-05-11 10:00,,2013-04-23 00:00,2013-04-23 00:00,,,2013-04-23 07:00,2013-04-26 17:00,,,,,PT_Normal,,,,,jLYwW0TnkEu/GeKFJDZYJw,d+oFrjfdWESj054frIZiXw,,,N,0,0,,,2013-06-23 13:00,2013-06-23 13:00,admin,admin
317,85402,1346,11522,1473,1,100,N,N,N,CP_Phys,TT_Task,DT_FixedDrtn,RV_OK,TK_Complete,A22,MAR for Micro Silica,,,,0,0,0,0,220,0,0,0,,2013-01-28 00:00,2013-03-11 00:00,2013-05-11 10:00,2013-05-11 10:00,,2013-04-23 00:00,2013-04-23 00:00,,,2013-04-23 07:00,2013-05-22 17:00,,,,,PT_Normal,,,,,o75z9ZT2L06b1EwKh/hPyg,3rdy1EFDvkSRLV8h3jDSng,,,N,0,0,,,2013-06-23 13:00,2013-06-23 13:00,admin,admin
318,85403,1346,11522,1473,1,100,N,N,N,CP_Phys,TT_Task,DT_FixedDrtn,RV_OK,TK_Complete,A55,MIR for Micro Silica,,,,0,0,0,0,20,0,0,0,,2013-03-16 00:00,2013-03-18 00:00,2013-05-11 10:00,2013-05-11 10:00,,2013-04-23 00:00,2013-04-23 00:00,,,2013-04-23 07:00,2013-04-24 17:00,,,,,PT_Normal,,,,,501zf+xMTkeIpGmPvUsHVg,b44MG7SIKkqpfDXmpGpO7A,,,N,0,0,,,2013-06-23 13:00,2013-06-23 13:00,admin,admin
319,85404,1346,11522,1474,1,100,N,N,N,CP_Phys,TT_Task,DT_FixedDrtn,RV_OK,TK_Complete,A37,Procurment  for Micro Silica,,,,0,0,0,0,40,0,0,0,,2013-03-11 00:00,2013-03-16 00:00,2013-05-11 10:00,2013-05-11 10:00,,2013-04-23 00:00,2013-04-23 00:00,,,2013-04-23 07:00,2013-04-26 17:00,,,,,PT_Normal,,,,,pE/80L/7LU2UJr9C6UKdXQ,czT4IJLNtE+4BhL0OkP9pg,,,N,0,0,,,2013-06-23 13:00,2013-06-23 13:00,admin,admin
320,85405,1346,11522,1473,1,100,N,N,N,CP_Phys,TT_Task,DT_FixedDrtn,RV_OK,TK_Complete,A56,MIR for Admixture,,,,0,0,0,0,20,0,0,0,,2013-03-16 00:00,2013-03-18 00:00,2013-05-11 10:00,2013-05-11 10:00,,2013-04-23 00:00,2013-04-23 00:00,,,2013-06-12 07:00,2013-06-15 17:00,,,,,PT_Normal,,,,,NHRKFVkfs0KHZTdsE67PpA,3rdy1EFDvkSRLV8h3jDSng,,,N,0,0,,,2013-06-23 13:00,2013-06-23 13:00,admin,admin
321,85406,1346,11522,1473,1,100,N,N,N,CP_Phys,TT_Task,DT_FixedDrtn,RV_OK,TK_Complete,A23,MAR for Admixture,,,,0,0,0,0,220,0,0,0,,2013-01-28 00:00,2013-03-11 00:00,2013-05-11 10:00,2013-05-11 10:00,,2013-04-23 00:00,2013-04-23 00:00,,,2013-04-23 07:00,2013-05-22 17:00,,,,,PT_Normal,,,,,EvZEt1O4b0iIu8hxET+vSA,b44MG7SIKkqpfDXmpGpO7A,,,N,0,0,,,2013-06-23 13:00,2013-06-23 13:00,admin,admin
322,85407,1346,11522,1474,1,100,N,N,N,CP_Phys,TT_Task,DT_FixedDrtn,RV_OK,TK_Complete,A38,Procurment  for Admixture,,,,0,0,0,0,40,0,0,0,,2013-03-12 00:00,2013-03-16 00:00,2013-05-11 10:00,2013-05-11 10:00,,2013-04-23 00:00,2013-04-23 00:00,,,2013-06-04 07:00,2013-06-07 17:00,,,,,PT_Normal,,,,,02R3VGF6wUOE4s8gM1piWA,czT4IJLNtE+4BhL0OkP9pg,,,N,0,0,,,2013-06-23 13:00,2013-06-23 13:00,admin,admin
323,85408,1346,11522,1473,1,100,N,N,N,CP_Phys,TT_Task,DT_FixedDrtn,RV_OK,TK_Complete,A57,MIR for Concrete 16/20,,,,0,0,0,0,20,0,0,0,,2013-03-23 00:00,2013-03-25 00:00,2013-05-11 10:00,2013-05-11 10:00,,2013-04-23 00:00,2013-04-23 00:00,,,2013-04-23 07:00,2013-04-24 17:00,,,,,PT_Normal,,,,,oY/9FAAJ+UiGnWCbSMF9lw,hjeuIksyhEqWA8Ta5+w2QA,,,N,0,0,,,2013-06-23 13:00,2013-06-23 13:00,admin,admin
324,85409,1346,11522,1473,1,100,N,N,N,CP_Phys,TT_Task,DT_FixedDrtn,RV_OK,TK_Complete,A25,MAR for Concrete 16/20,,,,0,0,0,0,220,0,0,0,,2013-01-19 00:00,2013-03-19 00:00,2013-05-11 10:00,2013-05-11 10:00,,2013-04-23 00:00,2013-04-23 00:00,,,2012-12-17 07:00,2013-01-15 17:00,,,,,PT_Normal,,,,,pDiZX3Ez6kemLcemJ/dffQ,VW0s1B2ImUGGKBPov08Xkw,,,N,0,0,,,2013-06-23 13:00,2013-06-23 13:00,admin,admin
325,85410,1346,11522,1474,1,100,N,N,N,CP_Phys,TT_Task,DT_FixedDrtn,RV_OK,TK_Complete,A40,Procurment  for Concrete 16/20,,,,0,0,0,0,40,0,0,0,,2013-03-19 00:00,2013-03-23 00:00,2013-05-11 10:00,2013-05-11 10:00,,2013-04-23 00:00,2013-04-23 00:00,,,2013-04-23 07:00,2013-04-26 17:00,,,,,PT_Normal,,,,,YAHLh5AT4U+8+uz9knHuPQ,rbavrL7KYUm8agBrww6RFg,,,N,0,0,,,2013-06-23 13:00,2013-06-23 13:00,admin,admin
326,85411,1346,11522,1473,1,100,N,N,N,CP_Phys,TT_Task,DT_FixedDrtn,RV_OK,TK_Complete,A58,MIR for Concrete 40/20 MS - 7,,,,0,0,0,0,20,0,0,0,,2013-03-23 00:00,2013-03-25 00:00,2013-05-11 10:00,2013-05-11 10:00,,2013-04-23 00:00,2013-04-23 00:00,,,2013-04-23 07:00,2013-04-24 17:00,,,,,PT_Normal,,,,,OxF2/gpAIUKANN2HStKSFw,c8hnW2iUlkaYPCL2pb6USg,,,N,0,0,,,2013-06-23 13:00,2013-06-23 13:00,admin,admin
327,85412,1346,11522,1473,1,100,N,N,N,CP_Phys,TT_Task,DT_FixedDrtn,RV_OK,TK_Complete,A26,MAR for Concrete 40/20 MS - 7,,,,0,0,0,0,220,0,0,0,,2013-01-19 00:00,2013-03-19 00:00,2013-05-11 10:00,2013-05-11 10:00,,2013-04-23 00:00,2013-04-23 00:00,,,2012-12-17 07:00,2013-01-15 17:00,,,,,PT_Normal,,,,,lgTQ6P2t+0eSFJVz1BVs3w,SApWa1fyS0mYmVH03JPGHw,,,N,0,0,,,2013-06-23 13:00,2013-06-23 13:00,admin,admin
328,85413,1346,11522,1474,1,100,N,N,N,CP_Phys,TT_Task,DT_FixedDrtn,RV_OK,TK_Complete,A41,Procurment  for Concrete 40/20 MS - 7,,,,0,0,0,0,40,0,0,0,,2013-03-19 00:00,2013-03-23 00:00,2013-05-11 10:00,2013-05-11 10:00,,2013-04-23 00:00,2013-04-23 00:00,,,2013-04-23 07:00,2013-04-26 17:00,,,,,PT_Normal,,,,,jgGhvCpf7Ei57uPQMrdTYA,KWs3gNM5j0OBsGf/22eKkA,,,N,0,0,,,2013-06-23 13:00,2013-06-23 13:00,admin,admin
329,85414,1346,11522,1473,1,100,N,N,N,CP_Phys,TT_Task,DT_FixedDrtn,RV_OK,TK_Complete,A59,MIR for Concrete 45/20 MS - 7,,,,0,0,0,0,20,0,0,0,,2013-03-23 00:00,2013-03-25 00:00,2013-05-11 10:00,2013-05-11 10:00,,2013-04-23 00:00,2013-04-23 00:00,,,2013-04-23 07:00,2013-04-24 17:00,,,,,PT_Normal,,,,,mPYcJWNfv0y7orXGgE3c/A,XMtTLc9dEUqQu4Y27VgYAg,,,N,0,0,,,2013-06-23 13:00,2013-06-23 13:00,admin,admin
330,85415,1346,11522,1473,1,100,N,N,N,CP_Phys,TT_Task,DT_FixedDrtn,RV_OK,TK_Complete,A27,MAR for Concrete 45/20 MS - 7,,,,0,0,0,0,220,0,0,0,,2013-01-19 00:00,2013-03-19 00:00,2013-05-11 10:00,2013-05-11 10:00,,2013-04-23 00:00,2013-04-23 00:00,,,2012-12-17 07:00,2013-01-15 17:00,,,,,PT_Normal,,,,,LcttOJ1A9EaNeXYZ04SF8w,LsP/mbWAZUOq1EI96ltuYg,,,N,0,0,,,2013-06-23 13:00,2013-06-23 13:00,admin,admin
331,85416,1346,11522,1474,1,100,N,N,N,CP_Phys,TT_Task,DT_FixedDrtn,RV_OK,TK_Complete,A42,Procurment  for Concrete 45/20 MS - 7,,,,0,0,0,0,40,0,0,0,,2013-03-19 00:00,2013-03-23 00:00,2013-05-11 10:00,2013-05-11 10:00,,2013-04-23 00:00,2013-04-23 00:00,,,2013-04-23 07:00,2013-04-26 17:00,,,,,PT_Normal,,,,,1xOB6Fw/nU27mwIs+crXkQ,6ttfbXX5ZkagWg1nkag/fQ,,,N,0,0,,,2013-06-23 13:00,2013-06-23 13:00,admin,admin
332,85417,1346,11522,1473,1,100,N,N,N,CP_Phys,TT_Task,DT_FixedDrtn,RV_OK,TK_Complete,A60,MIR for Concrete 50/20 MS - 7,,,,0,0,0,0,20,0,0,0,,2013-03-23 00:00,2013-03-25 00:00,2013-05-11 10:00,2013-05-11 10:00,,2013-04-23 00:00,2013-04-23 00:00,,,2013-04-23 07:00,2013-04-24 17:00,,,,,PT_Normal,,,,,dTOMhn1oJUCuU5/NX5k8pQ,odcY8kw0DUSXwNq2cSWayw,,,N,0,0,,,2013-06-23 13:00,2013-06-23 13:00,admin,admin
333,85418,1346,11522,1473,1,100,N,N,N,CP_Phys,TT_Task,DT_FixedDrtn,RV_OK,TK_Complete,A28,MAR for Concrete 50/20 MS - 7,,,,0,0,0,0,220,0,0,0,,2013-01-19 00:00,2013-03-19 00:00,2013-05-11 10:00,2013-05-11 10:00,,2013-04-23 00:00,2013-04-23 00:00,,,2012-12-17 07:00,2013-01-15 17:00,,,,,PT_Normal,,,,,jzyHPvz/UEGbR3FhejVMag,lDULwHcqUkezYLqjkN+rug,,,N,0,0,,,2013-06-23 13:00,2013-06-23 13:00,admin,admin
334,85419,1346,11522,1474,1,100,N,N,N,CP_Phys,TT_Task,DT_FixedDrtn,RV_OK,TK_Complete,A43,Procurment  for Concrete 50/20 MS - 7,,,,0,0,0,0,40,0,0,0,,2013-03-19 00:00,2013-03-23 00:00,2013-05-11 10:00,2013-05-11 10:00,,2013-04-23 00:00,2013-04-23 00:00,,,2013-04-23 07:00,2013-04-26 17:00,,,,,PT_Normal,,,,,QAj/tIb5skqBEL8dndWnkg,hvQOZ0SggUaj4F39U/jpRw,,,N,0,0,,,2013-06-23 13:00,2013-06-23 13:00,admin,admin
335,85420,1346,11522,1473,1,100,N,N,N,CP_Phys,TT_Task,DT_FixedDrtn,RV_OK,TK_Complete,A50,MIR for Aggregate,,,,0,0,0,0,20,0,0,0,,2013-01-29 00:00,2013-02-02 00:00,2013-05-11 10:00,2013-05-11 10:00,,2013-04-23 00:00,2013-04-23 00:00,,,2013-04-23 07:00,2013-04-24 17:00,,,,,PT_Normal,,,,,Y/joviSmYEuymWbZ8blO+Q,Z8WOvo+1L0iuM1knYhyN3Q,,,N,0,0,,,2013-06-23 13:00,2013-06-23 13:00,admin,admin
336,85421,1346,11522,1473,1,100,N,N,N,CP_Phys,TT_Task,DT_FixedDrtn,RV_OK,TK_Complete,A29,MAR for Aggregate,,,,0,0,0,0,220,0,0,0,,2012-12-17 07:00,2013-01-27 17:00,2013-05-11 10:00,2013-05-11 10:00,,2013-04-23 00:00,2013-04-23 00:00,,,2012-12-17 07:00,2013-01-15 17:00,,,,,PT_Normal,,,,,rhlD0cMjqUifkgeV61k9Nw,VcvgJdIGmkK/XTkTtsP8Ng,,,N,0,0,,,2013-06-23 13:00,2013-06-23 13:00,admin,admin
337,85422,1346,11522,1474,1,100,N,N,N,CP_Phys,TT_Task,DT_FixedDrtn,RV_OK,TK_Complete,A44,Procurment  for Aggregate,,,,0,0,0,0,20,0,0,0,,2013-01-27 00:00,2013-01-29 00:00,2013-05-11 10:00,2013-05-11 10:00,,2013-04-23 00:00,2013-04-23 00:00,,,2013-04-23 07:00,2013-04-24 17:00,,,,,PT_Normal,,,,,nYpprkJvakqZFFhz61/6FA,Bhv7PFghOkeD2DdskRBzDQ,,,N,0,0,,,2013-06-23 13:00,2013-06-23 13:00,admin,admin
338,85423,1346,11522,1473,1,100,N,N,N,CP_Phys,TT_Task,DT_FixedDrtn,RV_OK,TK_Complete,A51,MIR for Sand,,,,0,0,0,0,20,0,0,0,,2013-01-29 00:00,2013-02-02 00:00,2013-05-11 10:00,2013-05-11 10:00,,2013-04-23 00:00,2013-04-23 00:00,,,2013-04-23 07:00,2013-04-24 17:00,,,,,PT_Normal,,,,,dse6g+/BLEe8tV58PVe2Fw,fBxdMe+Y0UyH+qg5O5amQg,,,N,0,0,,,2013-06-23 13:00,2013-06-23 13:00,admin,admin
339,85424,1346,11522,1473,1,100,N,N,N,CP_Phys,TT_Task,DT_FixedDrtn,RV_OK,TK_Complete,A30,MAR for Sand,,,,0,0,0,0,220,0,0,0,,2012-12-17 07:00,2013-01-27 17:00,2013-05-11 10:00,2013-05-11 10:00,,2013-04-23 00:00,2013-04-23 00:00,,,2012-12-17 07:00,2013-01-15 17:00,,,,,PT_Normal,,,,,LI8car50uEaBQ7/FsopgoQ,LICJshg+f0635WJVFAITdQ,,,N,0,0,,,2013-06-23 13:00,2013-06-23 13:00,admin,admin
340,85425,1346,11522,1474,1,100,N,N,N,CP_Phys,TT_Task,DT_FixedDrtn,RV_OK,TK_Complete,A45,Procurment  for Sand,,,,0,0,0,0,20,0,0,0,,2013-01-27 00:00,2013-01-29 00:00,2013-05-11 10:00,2013-05-11 10:00,,2013-04-23 00:00,2013-04-23 00:00,,,2013-04-23 07:00,2013-04-24 17:00,,,,,PT_Normal,,,,,e6juMVzKD0+9UdwCmiQLCg,2wx+RNDhm0uUCNURrFIACg,,,N,0,0,,,2013-06-23 13:00,2013-06-23 13:00,admin,admin
341,85426,1346,11522,1473,1,100,N,N,N,CP_Phys,TT_Task,DT_FixedDrtn,RV_OK,TK_Complete,A61,MIR for High yield Steel Bars (all diameters),,,,0,0,0,0,20,0,0,0,,2013-03-10 00:00,2013-03-11 00:00,2013-05-08 13:00,2013-05-08 13:00,,2013-04-23 00:00,2013-04-23 00:00,,,2013-02-05 07:00,2013-02-06 17:00,,,,,PT_Normal,,,,,C2NBe/czpESdsfzd+Ue18g,3rdy1EFDvkSRLV8h3jDSng,,,N,0,0,,,2013-06-23 13:00,2013-06-23 13:00,admin,admin
342,85427,1346,11522,1473,1,100,N,N,N,CP_Phys,TT_Task,DT_FixedDrtn,RV_OK,TK_Complete,A31,MAR for High yield Steel Bars (all diameters),,,,0,0,0,0,220,0,0,0,,2013-01-26 00:00,2013-02-26 00:00,2013-05-08 13:00,2013-05-08 13:00,,2013-04-23 00:00,2013-04-23 00:00,,,2012-12-17 07:00,2013-01-15 17:00,,,,,PT_Normal,,,,,0USIksGmY0CYhBY8TCbFQg,b44MG7SIKkqpfDXmpGpO7A,,,N,0,0,,,2013-06-23 13:00,2013-06-23 13:00,admin,admin
343,85428,1346,11522,1474,1,100,N,N,N,CP_Phys,TT_Task,DT_FixedDrtn,RV_OK,TK_Complete,A46,Procurment  for High yield Steel Bars (all diameters),,,,0,0,0,0,40,0,0,0,,2013-03-19 00:00,2013-03-23 00:00,2013-05-08 13:00,2013-05-08 13:00,,2013-04-23 00:00,2013-04-23 00:00,,,2013-01-28 07:00,2013-01-31 17:00,,,,,PT_Normal,,,,,ywi1vE/3YU2WC37lAa8xTw,czT4IJLNtE+4BhL0OkP9pg,,,N,0,0,,,2013-06-23 13:00,2013-06-23 13:00,admin,admin
344,85429,1346,11522,1473,1,100,N,N,N,CP_Phys,TT_Task,DT_FixedDrtn,RV_OK,TK_Complete,A32,MAR for Water Proofing Membrane,,,,0,0,0,0,220,0,0,0,,2013-02-05 00:00,2013-03-03 00:00,2013-05-11 10:00,2013-05-11 10:00,,2013-04-23 00:00,2013-04-23 00:00,,,2012-12-31 07:00,2013-01-29 17:00,,,,,PT_Normal,,,,,95wsaq/HTkeuUtEOfccgKg,4hEjRcAeyUyDeED29Kppog,,,N,0,0,,,2013-06-23 13:00,2013-06-23 13:00,admin,admin
345,85430,1346,11522,1473,1,100,N,N,N,CP_Phys,TT_Task,DT_FixedDrtn,RV_OK,TK_Complete,A67,MIR for Water Proofing Membrane,,,,0,0,0,0,20,0,0,0,,2013-03-09 00:00,2013-03-11 00:00,2013-05-11 10:00,2013-05-11 10:00,,2013-04-23 00:00,2013-04-23 00:00,,,2013-02-19 07:00,2013-02-20 17:00,,,,,PT_Normal,,,,,t1vFGLMar06qEiZ+w7pbKA,p8JYa66cTEuPR1EQPRpikQ,,,N,0,0,,,2013-06-23 13:00,2013-06-23 13:00,admin,admin
346,85431,1346,11522,1474,1,100,N,N,N,CP_Phys,TT_Task,DT_FixedDrtn,RV_OK,TK_Complete,A64,Procurment  for Water Proofing Membrane,,,,0,0,0,0,40,0,0,0,,2013-03-20 00:00,2013-03-24 00:00,2013-05-11 10:00,2013-05-11 10:00,,2013-04-23 00:00,2013-04-23 00:00,,,2013-02-11 07:00,2013-02-14 17:00,,,,,PT_Normal,,,,,S71+2e6kQUaDMsHyhWBeIg,/AuoZvEfsEOdOGnHNMYqFA,,,N,0,0,,,2013-06-23 13:00,2013-06-23 13:00,admin,admin
347,85432,1346,11522,1473,1,80,N,N,N,CP_Phys,TT_Task,DT_FixedDrtn,RV_OK,TK_Active,A33,MAR for Bitumen Protection Board - 6 mm,,123,0,0,0,0,0,220,0,0,0,,2013-02-05 00:00,,2013-05-11 10:00,2013-05-11 10:00,,2013-04-23 07:00,2013-04-23 07:00,2013-04-23 07:00,2013-04-23 07:00,2013-04-23 07:00,2013-05-22 17:00,,2013-05-11 10:00,2013-05-11 10:00,,PT_Normal,,,,,AFJIK7Tv3kGFxLMVRG45Jg,cTEeUSjuYUKa9JFwWrgV1Q,,,N,0,0,,,2013-06-23 13:00,2013-06-23 13:00,admin,admin
348,85433,1346,11522,1473,1,100,N,N,N,CP_Phys,TT_Task,DT_FixedDrtn,RV_OK,TK_Complete,A68,MIR for Bitumen Protection Board - 6 mm,,,,0,0,0,0,20,0,0,0,,2013-02-24 00:00,2013-02-26 00:00,2013-05-11 10:00,2013-05-11 10:00,,2013-04-23 07:00,2013-04-23 07:00,,,2013-06-04 07:00,2013-06-05 17:00,,,,,PT_Normal,,,,,VdCUaUCDo0q6O58OXJEBcw,CpqFVmubuUuYUH390ue54w,,,N,0,0,,,2013-06-23 13:00,2013-06-23 13:00,admin,admin
349,85434,1346,11522,1474,1,100,N,N,N,CP_Phys,TT_Task,DT_FixedDrtn,RV_OK,TK_Complete,A65,Procurment  for Bitumen Protection Board - 6 mm,,,,0,0,0,0,40,0,0,0,,2013-02-16 00:00,2013-02-20 00:00,2013-05-11 10:00,2013-05-11 10:00,,2013-04-23 07:00,2013-04-23 07:00,,,2013-06-04 07:00,2013-06-07 17:00,,,,,PT_Normal,,,,,KEBs2Ho6akqD9XV4U9W4vQ,nMneaEEUbEyJUDoIw52W6g,,,N,0,0,,,2013-06-23 13:00,2013-06-23 13:00,admin,admin
350,85435,1346,11522,1473,1,100,N,N,N,CP_Phys,TT_Task,DT_FixedDrtn,RV_OK,TK_Complete,A75,MIR for Ready mix concrete,,,,0,0,0,0,20,0,0,0,,2013-02-24 00:00,2013-02-26 00:00,2013-09-02 08:00,2013-09-02 08:00,,2013-04-23 00:00,2013-04-23 00:00,,,2013-05-01 07:00,2013-05-04 17:00,,,,,PT_Normal,,,,,Zc/tS+vxO0Km4i+1Ge8+sg,4hEjRcAeyUyDeED29Kppog,,,N,0,0,,,2013-06-23 13:00,2013-06-23 13:00,admin,admin
351,85436,1346,11522,1473,1,100,N,N,N,CP_Phys,TT_Task,DT_FixedDrtn,RV_OK,TK_Complete,A47,MAR for Ready mix concrete,,,,0,0,0,0,220,0,0,0,,2013-02-23 00:00,2013-02-24 00:00,2013-09-02 08:00,2013-09-02 08:00,,2013-04-23 00:00,2013-04-23 00:00,,,2013-04-23 07:00,2013-05-22 17:00,,,,,PT_Normal,,,,,0JrYXdVHSkOKo7KJwnmeaQ,p8JYa66cTEuPR1EQPRpikQ,,,N,0,0,,,2013-06-23 13:00,2013-06-23 13:00,admin,admin
352,85437,1346,11522,1474,1,100,N,N,N,CP_Phys,TT_Task,DT_FixedDrtn,RV_OK,TK_Complete,A74,Procurment  for Ready mix concrete,,,,0,0,0,0,40,0,0,0,,2013-02-24 00:00,2013-02-26 00:00,2013-09-02 08:00,2013-09-02 08:00,,2013-04-23 00:00,2013-04-23 00:00,,,2013-04-23 07:00,2013-04-26 17:00,,,,,PT_Normal,,,,,/4//dOecTkaVeGEwtsQBLA,/AuoZvEfsEOdOGnHNMYqFA,,,N,0,0,,,2013-06-23 13:00,2013-06-23 13:00,admin,admin
353,85438,1346,11522,1473,1,100,N,N,N,CP_Phys,TT_Task,DT_FixedDrtn,RV_OK,TK_Complete,A69,Setting Out for Raft Foundations,2983,,,0,54,0,54,18,18,0,0,,2013-02-16 00:00,2013-02-19 00:00,2013-05-11 10:00,2013-05-11 10:00,,2013-04-23 00:00,2013-04-23 00:00,,,2013-05-05 07:00,2013-05-06 15:00,,,,,PT_Normal,,,,,DQFJn5DPD0GIIWPOPXJpKg,WTagQDzoTeeiQH8FGe8z5Q,,,N,54,0,,,2013-06-23 13:00,2013-06-23 13:00,admin,admin
354,85439,1346,11522,1473,1,100,N,N,N,CP_Phys,TT_Task,DT_FixedDrtn,RV_OK,TK_Complete,A63,Structural Excavation,2984,,,0,220,0,220,50,150,150,0,,2013-02-19 00:00,2013-02-27 00:00,2013-05-11 10:00,2013-05-11 10:00,,2013-04-23 00:00,2013-04-23 00:00,,,2013-05-06 15:00,2013-05-13 15:00,,,,,PT_Normal,,,,,FZ0M2LLflUqRWIHvCOSJ7g,dcVYs2+FRZaaZN1s/IbNXA,,,N,220,150,,,2013-06-23 13:00,2013-06-23 13:00,admin,admin
355,85440,1346,11522,1473,1,100,N,N,N,CP_Phys,TT_Task,DT_FixedDrtn,RV_OK,TK_Complete,A73,Placing of Blinding Concrete,2969,,,0,61,0,61,9,16,16,0,,2013-03-05 00:00,2013-03-06 00:00,2013-05-11 10:00,2013-05-11 10:00,,2013-04-23 00:00,2013-04-23 00:00,,,2013-06-12 07:00,2013-06-12 16:00,,,,,PT_Normal,,,,,Kt/8hUiouE6rH7lWR9beSg,/4NEA7QpTWOe5QM3BcII+A,,,N,61,16,,,2013-06-23 13:00,2013-06-23 13:00,admin,admin
356,85441,1346,11522,1473,1,100,N,N,N,CP_Phys,TT_Task,DT_FixedDrtn,RV_OK,TK_Complete,A78,Reinforcement Fixing for Raft Foundations,2970,,,0,704,0,704,54,50,50,0,,2013-03-13 00:00,2013-03-20 00:00,2013-05-11 10:00,2013-05-11 10:00,,2013-04-23 07:00,2013-04-23 07:00,,,2013-06-12 07:00,2013-06-19 11:00,,,,,PT_Normal,,,,,A4+wcg9Z9ky9NlZpYBRmyg,eUzKvQyER6OfH97vGGKtHw,,,N,704,50,,,2013-06-23 13:00,2013-06-23 13:00,admin,admin
357,85442,1346,11522,1473,1,100,N,N,N,CP_Phys,TT_Task,DT_FixedDrtn,RV_OK,TK_Complete,A79,Formworks for Raft Foundations,2969,,,0,147,0,147,9,9,9,0,,2013-03-20 00:00,2013-03-23 07:00,2013-05-11 10:00,2013-05-11 10:00,,2013-04-23 07:00,2013-04-23 07:00,,,2013-05-15 07:00,2013-05-15 16:00,,,,,PT_Normal,,,,,pauhyle4PUiiYqxrxDJobg,mgJftIAUQs6fF/Dmm+wG1A,,,N,147,9,,,2013-06-23 13:00,2013-06-23 13:00,admin,admin
358,85443,1346,11522,1473,1,100,N,N,N,CP_Phys,TT_Task,DT_FixedDrtn,RV_OK,TK_Complete,A80,Concreting for Raft Foundations,2969,,,0,179,0,179,9,109,109,0,,2013-03-23 00:00,2013-03-24 00:00,2013-05-11 10:00,2013-05-11 10:00,,2013-04-23 07:00,2013-04-23 07:00,,,2013-05-15 07:00,2013-05-15 16:00,,,,,PT_Normal,,,,,gd9UXhF4c0uO4JWcCcKJ5w,VUedp74xSgOsuvxAfsqRgw,,,N,179,109,,,2013-06-23 13:00,2013-06-23 13:00,admin,admin
359,85444,1346,11522,1473,1,100,N,N,N,CP_Phys,TT_Task,DT_FixedDrtn,RV_OK,TK_Complete,A52,Preparation & Submission of Bar Schedule Drawings,,,,0,0,0,0,80,0,0,0,,2013-02-02 00:00,2013-02-09 00:00,2013-05-08 13:00,2013-05-08 13:00,,2013-04-23 00:00,2013-04-23 00:00,,,2013-05-15 07:00,2013-05-26 17:00,,,,,PT_Normal,,,,,zCMnu2KynUqc+/dsF+ZHlw,iUOcURhtT1aFxmxCk5fsQw,,,N,0,0,,,2013-06-23 13:00,2013-06-23 13:00,admin,admin
360,85445,1346,11522,1473,1,100,N,N,N,CP_Phys,TT_Task,DT_FixedDrtn,RV_OK,TK_Complete,A53,Approval of Shop Drawings,,,,0,0,0,0,140,0,0,0,,2013-02-02 00:00,2013-02-20 00:00,2013-05-11 10:00,2013-05-11 10:00,,2013-04-23 00:00,2013-04-23 00:00,,,2013-05-05 07:00,2013-05-22 17:00,,,,,PT_Normal,,,,,zJWsl9DPJ0mCCcdx/ieZ5g,AGVVBpwKTMiIAwnPeBrBoQ,,,N,0,0,,,2013-06-23 13:00,2013-06-23 13:00,admin,admin
361,85446,1346,11522,1473,1,100,N,N,N,CP_Phys,TT_Task,DT_FixedDrtn,RV_OK,TK_Complete,A76,"Application of Primer, Water Proofing Membrane",2969,,,0,147,0,147,27,0,0,0,,2013-03-09 00:00,2013-03-12 00:00,2013-05-11 10:00,2013-05-11 10:00,,2013-04-23 07:00,2013-04-23 07:00,,,2013-06-12 16:00,2013-06-17 13:00,,,,,PT_Normal,,,,,FtACOVOC6UGhV6p2ykKNTg,SL/T8koKQcCbzQYf4Q+/yA,,,N,147,0,,,2013-06-23 13:00,2013-06-23 13:00,admin,admin
362,85447,1346,11522,1473,1,100,N,N,N,CP_Phys,TT_Task,DT_FixedDrtn,RV_OK,TK_Complete,A71,Reinforcement Cutting & Bending for Raft Foundations,2970,,,0,1320,0,1320,60,120,120,0,,2013-02-27 00:00,2013-03-09 00:00,2013-05-08 13:00,2013-05-08 13:00,,2013-04-23 00:00,2013-04-23 00:00,,,2013-05-15 07:00,2013-05-22 17:00,,,,,PT_Normal,,,,,a8OPvRVGC0O7oVWPz7Acfg,DB/U9IKZQiCncyG5AwIV8Q,,,N,1320,120,,,2013-06-23 13:00,2013-06-23 13:00,admin,admin
363,85448,1346,11522,1473,1,100,N,N,N,CP_Phys,TT_Task,DT_FixedDrtn,RV_OK,TK_Complete,A81,Removal of Formwork for Raft Foundations,2971,,,0,156,0,156,18,18,18,0,,2013-03-24 00:00,2013-03-26 00:00,2013-05-11 10:00,2013-05-11 10:00,,2013-04-23 07:00,2013-04-23 07:00,,,2013-05-15 07:00,2013-05-18 15:00,,,,,PT_Normal,,,,,SX3FaUVq/EqC2DlNDXvtUA,8R+rL5wWSr+HQ+9QHxTCeQ,,,N,156,18,,,2013-06-23 13:00,2013-06-23 13:00,admin,admin
364,85449,1346,11522,1473,1,100,N,N,N,CP_Phys,TT_Task,DT_FixedDrtn,RV_OK,TK_Complete,A34,Preparation & Submission of Shop Drawings,,,,0,0,0,0,80,0,0,0,,2013-01-28 00:00,2013-02-02 00:00,2013-05-08 13:00,2013-05-08 13:00,,2013-04-23 00:00,2013-04-23 00:00,,,2013-05-05 07:00,2013-05-14 17:00,,,,,PT_Normal,,,,,05oXF9jmQE+Tlrb2imIPyQ,Wvvrtwo8S867dCfQWahC5Q,,,N,0,0,,,2013-06-23 13:00,2013-06-23 13:00,admin,admin
365,85450,1346,11522,1473,1,100,N,N,N,CP_Phys,TT_Task,DT_FixedDrtn,RV_OK,TK_Complete,A62,Approval of Bar Schedule Drawings,,,,0,0,0,0,140,0,0,0,,2013-02-09 00:00,2013-02-27 00:00,2013-05-08 13:00,2013-05-08 13:00,,2013-04-23 00:00,2013-04-23 00:00,,,2013-05-15 07:00,2013-06-03 17:00,,,,,PT_Normal,,,,,oYXhFPaWu0mvzs0vWVE1gw,pLYoEvYjTSidOwXlodPzAA,,,N,0,0,,,2013-06-23 13:00,2013-06-23 13:00,admin,admin
366,85451,1346,11522,1473,1,100,N,N,N,CP_Phys,TT_Task,DT_FixedDrtn,RV_OK,TK_Complete,A66,Foundation Beds Prepration,2980,,,0,200,0,200,36,0,0,0,,2013-02-19 00:00,2013-02-24 00:00,2013-05-11 10:00,2013-05-11 10:00,,2013-04-23 00:00,2013-04-23 00:00,,,2013-05-05 07:00,2013-05-08 13:00,,,,,PT_Normal,,,,,4ctkSpzUqkeCVd/d4viApA,bJQA7MwuQ6iXqY9DLPSdjw,,,N,200,0,,,2013-06-23 13:00,2013-06-23 13:00,admin,admin
367,85452,1346,11522,1473,1,100,N,N,N,CP_Phys,TT_Task,DT_FixedDrtn,RV_OK,TK_Complete,A77,Concrete Screed,2971,,,0,49,0,49,9,0,0,0,,2013-03-10 00:00,2013-03-11 00:00,2013-05-11 10:00,2013-05-11 10:00,,2013-04-23 07:00,2013-04-23 07:00,,,2013-05-05 07:00,2013-05-05 16:00,,,,,PT_Normal,,,,,eNOsWzEpn0OpEQgvHCKgxw,lL1DmjH2TieadZv4m5s2VQ,,,N,49,0,,,2013-06-23 13:00,2013-06-23 13:00,admin,admin
368,85453,1346,11522,1473,1,100,N,N,N,CP_Phys,TT_Task,DT_FixedDrtn,RV_OK,TK_Complete,A72,Completion of Raft Foundations for Pier 2 - WB & EB,,,,0,0,0,0,8,0,0,0,,2013-03-26 00:00,2013-03-27 00:00,2013-05-11 10:00,2013-05-11 10:00,,2013-04-23 07:00,2013-04-23 07:00,,,2013-05-15 07:00,2013-05-15 15:00,,,,,PT_Normal,,,,,r/q7gPKSwk21RiPNobJmDw,jWd9UBuaRt6nTL0Bf3xdlA,,,N,0,0,,,2013-06-23 13:00,2013-06-23 13:00,admin,admin
369,85454,1346,11522,1473,1,100,N,N,N,CP_Phys,TT_Task,DT_FixedDrtn,RV_OK,TK_Complete,A70,Plate Load Testing & Submission of Reports,,,,0,0,0,0,63,0,0,0,,2013-03-02 00:00,2013-03-10 00:00,2013-05-11 10:00,2013-05-11 10:00,,2013-04-23 00:00,2013-04-23 00:00,,,2013-05-08 13:00,2013-05-18 16:00,,,,,PT_Normal,,,,,cTYl2r6wbkCrj8lnP8M7KA,BADCPG94TtOE2VWBhgu0vQ,,,N,0,0,,,2013-06-23 13:00,2013-06-23 13:00,admin,admin
370,85455,1346,11522,1473,1,100,N,N,N,CP_Phys,TT_Task,DT_FixedDrtn,RV_OK,TK_Complete,A15105,Prepartion & Submission for Cement material,,,,0,0,0,0,80,0,0,0,,2013-01-16 00:00,2013-01-27 00:00,2013-05-11 10:00,2013-05-11 10:00,,2013-04-23 00:00,2013-04-23 00:00,,,2012-12-17 07:00,2012-12-26 17:00,,,,,PT_Normal,,,,,Ncv8SDFxPEqdpPTD4u6h9g,Fc6UDVSsvUCpDSC1di22Mw,,,N,0,0,,,2013-06-23 13:00,2013-06-23 13:00,admin,admin
371,85456,1346,11522,1473,1,100,N,N,N,CP_Phys,TT_Task,DT_FixedDrtn,RV_OK,TK_Complete,A15106,Prepartion & Submission for Aggregate material,,,,0,0,0,0,80,0,0,0,,2012-12-17 07:00,2013-01-27 17:00,2013-05-11 10:00,2013-05-11 10:00,,2013-04-23 00:00,2013-04-23 00:00,,,2012-12-17 07:00,2012-12-26 17:00,,,,,PT_Normal,,,,,UGfiWDoqhkuUILtZbXpKmw,Js4/qRcCHkSmQ0FWlQS+Hg,,,N,0,0,,,2013-06-23 13:00,2013-06-23 13:00,admin,admin
372,85457,1346,11522,1473,1,100,N,N,N,CP_Phys,TT_Task,DT_FixedDrtn,RV_OK,TK_Complete,A15107,Prepartion & Submission for Sand material,,,,0,0,0,0,80,0,0,0,,2012-12-17 07:00,2013-01-27 17:00,2013-05-11 10:00,2013-05-11 10:00,,2013-04-23 00:00,2013-04-23 00:00,,,2012-12-17 07:00,2012-12-26 17:00,,,,,PT_Normal,,,,,c6UA4Ob1i0GqnOZcu1Ic4Q,FSAKzuNOWUetBLx22zg1XQ,,,N,0,0,,,2013-06-23 13:00,2013-06-23 13:00,admin,admin
373,85458,1346,11522,1473,1,100,N,N,N,CP_Phys,TT_Task,DT_FixedDrtn,RV_OK,TK_Complete,A15108,Prepartion & Submission for High yield Steel Bars (all diameters),,,,0,0,0,0,80,0,0,0,,2013-01-16 00:00,2013-01-26 00:00,2013-05-08 13:00,2013-05-08 13:00,,2013-04-23 00:00,2013-04-23 00:00,,,2012-12-17 07:00,2012-12-26 17:00,,,,,PT_Normal,,,,,kUNjH0LqH0WDRMvEz9ybbA,FfRLNwv6KUmFdaZnw6OAFA,,,N,0,0,,,2013-06-23 13:00,2013-06-23 13:00,admin,admin
374,85459,1346,11522,1473,1,100,N,N,N,CP_Phys,TT_Task,DT_FixedDrtn,RV_OK,TK_Complete,A15109,Prepartion & Submission for Concrete 30/20,,,,0,0,0,0,80,0,0,0,,2013-01-19 00:00,2013-03-19 00:00,2013-05-11 10:00,2013-05-11 10:00,,2013-04-23 00:00,2013-04-23 00:00,,,2012-12-17 07:00,2012-12-26 17:00,,,,,PT_Normal,,,,,4XcV1igeIUK8u5M0FXWcSw,v23sIroPHUuEhPQvkXveuw,,,N,0,0,,,2013-06-23 13:00,2013-06-23 13:00,admin,admin
375,85460,1346,11522,1473,1,100,N,N,N,CP_Phys,TT_Task,DT_FixedDrtn,RV_OK,TK_Complete,A15110,Prepartion & Submission for Concrete 16/20,,,,0,0,0,0,80,0,0,0,,2013-01-19 00:00,2013-03-19 00:00,2013-05-11 10:00,2013-05-11 10:00,,2013-04-23 00:00,2013-04-23 00:00,,,2012-12-17 07:00,2012-12-26 17:00,,,,,PT_Normal,,,,,TAeFanR3+0+Rk8yHfGJgDA,oiXp649HqkO/B67JM8zPCQ,,,N,0,0,,,2013-06-23 13:00,2013-06-23 13:00,admin,admin
376,85461,1346,11522,1473,1,100,N,N,N,CP_Phys,TT_Task,DT_FixedDrtn,RV_OK,TK_Complete,A15111,Prepartion & Submission for Concrete 40/20 MS - 7,,,,0,0,0,0,80,0,0,0,,2013-01-19 00:00,2013-03-19 00:00,2013-05-11 10:00,2013-05-11 10:00,,2013-04-23 00:00,2013-04-23 00:00,,,2012-12-17 07:00,2012-12-26 17:00,,,,,PT_Normal,,,,,/YR1SF0WIEukOCNBXhRapA,+OCdjwCn1UyRHjnogthl9w,,,N,0,0,,,2013-06-23 13:00,2013-06-23 13:00,admin,admin
377,85462,1346,11522,1473,1,100,N,N,N,CP_Phys,TT_Task,DT_FixedDrtn,RV_OK,TK_Complete,A15112,Prepartion & Submission for Bitumen Protection Board - 6 mm,,,,0,0,0,0,80,0,0,0,,2013-01-26 00:00,2013-02-05 00:00,2013-05-11 10:00,2013-05-11 10:00,,2013-04-23 00:00,2013-04-23 00:00,,,2013-04-23 07:00,2013-05-04 17:00,,,,,PT_Normal,,,,,Yu0HgppKT0Ka8YCiuooQvQ,vh4tkaiLvk+InRzeVa29Aw,,,N,0,0,,,2013-06-23 13:00,2013-06-23 13:00,admin,admin
378,85463,1346,11522,1473,1,100,N,N,N,CP_Phys,TT_Task,DT_FixedDrtn,RV_OK,TK_Complete,A15113,Prepartion & Submission for Concrete 45/20 MS - 7,,,,0,0,0,0,80,0,0,0,,2013-01-19 00:00,2013-03-19 00:00,2013-05-11 10:00,2013-05-11 10:00,,2013-04-23 00:00,2013-04-23 00:00,,,2012-12-17 07:00,2012-12-26 17:00,,,,,PT_Normal,,,,,WJxvZ1qh6UKjlSsAhryxhw,7tp5PI6M3UGg6I/f4ottUw,,,N,0,0,,,2013-06-23 13:00,2013-06-23 13:00,admin,admin
379,85464,1346,11522,1473,1,100,N,N,N,CP_Phys,TT_Task,DT_FixedDrtn,RV_OK,TK_Complete,A15114,Prepartion & Submission for Concrete 50/20 MS - 7,,,,0,0,0,0,80,0,0,0,,2013-01-19 00:00,2013-03-19 00:00,2013-05-11 10:00,2013-05-11 10:00,,2013-04-23 00:00,2013-04-23 00:00,,,2012-12-17 07:00,2012-12-26 17:00,,,,,PT_Normal,,,,,pNkwFKdj606KIc4A1bx8Mg,bh7uwWapyE69+YwM+JpDzw,,,N,0,0,,,2013-06-23 13:00,2013-06-23 13:00,admin,admin
380,85465,1346,11522,1473,1,100,N,N,N,CP_Phys,TT_Task,DT_FixedDrtn,RV_OK,TK_Complete,A15115,Prepartion & Submission for Water Proofing Membrane,,,,0,0,0,0,80,0,0,0,,2013-01-23 00:00,2013-02-05 00:00,2013-05-11 10:00,2013-05-11 10:00,,2013-04-23 00:00,2013-04-23 00:00,,,2012-12-31 07:00,2013-01-09 17:00,,,,,PT_Normal,,,,,5+7oyXHDBkeywUEhtHdoFQ,Wk3LEpePRES4dOoT7w4BLA,,,N,0,0,,,2013-06-23 13:00,2013-06-23 13:00,admin,admin
381,85466,1346,11522,1473,1,100,N,N,N,CP_Phys,TT_Task,DT_FixedDrtn,RV_OK,TK_Complete,A15116,Prepartion & Submission for Micro Silica,,,,0,0,0,0,80,0,0,0,,2013-01-28 00:00,2013-03-11 00:00,2013-05-11 10:00,2013-05-11 10:00,,2013-04-23 00:00,2013-04-23 00:00,,,2013-04-23 07:00,2013-05-04 17:00,,,,,PT_Normal,,,,,rqsdaCEObEi4NjDgYPzXdg,yuDGw82uekul+60d5wqD1w,,,N,0,0,,,2013-06-23 13:00,2013-06-23 13:00,admin,admin
382,85467,1346,11522,1473,1,100,N,N,N,CP_Phys,TT_Task,DT_FixedDrtn,RV_OK,TK_Complete,A15117,Prepartion & Submission for Admixture,,,,0,0,0,0,80,0,0,0,,2013-01-28 00:00,2013-03-11 00:00,2013-05-11 10:00,2013-05-11 10:00,,2013-04-23 00:00,2013-04-23 00:00,,,2013-04-23 07:00,2013-05-04 17:00,,,,,PT_Normal,,,,,0hbcArb8xk+vrknuNam2UA,/DJLmsupAUy6Ki8ZYfomtQ,,,N,0,0,,,2013-06-23 13:00,2013-06-23 13:00,admin,admin
383,85468,1346,11522,1473,1,100,N,N,N,CP_Phys,TT_Task,DT_FixedDrtn,RV_OK,TK_Complete,A15119,Prepartion & Submission for Ready mix concrete,,,,0,0,0,0,80,0,0,0,,2013-02-23 00:00,2013-02-24 00:00,2013-09-02 08:00,2013-09-02 08:00,,2013-04-23 00:00,2013-04-23 00:00,,,2013-04-23 07:00,2013-05-04 17:00,,,,,PT_Normal,,,,,rZYku5W11UGWhyXvzmaHiA,m4ha0lrasUqOZO55EhvU8Q,,,N,0,0,,,2013-06-23 13:00,2013-06-23 13:00,admin,admin
384,85469,1346,11548,1473,1,0,N,N,N,CP_Phys,TT_Task,DT_FixedDrtn,RV_OK,TK_NotStart,A109,Erection of Scaffolding for Pier - Lift 1,2969,123,7,20,0,128.888888,128.888888,20,17.777778,0,17.777778,,,,2013-05-12 09:00,2013-05-14 09:00,,2013-04-23 16:00,2013-04-27 16:00,2013-04-23 16:00,2013-04-27 16:00,2013-04-23 16:00,2013-04-27 16:00,,2013-05-12 09:00,2013-05-14 09:00,,PT_Normal,,,,,iYcA+pX5YEafazN5YRtdJg,qQFMhIqvT4iN22QWGgwjyw,,,N,0,0,,,2013-06-23 13:00,2013-06-23 13:00,admin,admin
385,85470,1346,11548,1473,1,0,N,N,N,CP_Phys,TT_Task,DT_FixedDrtn,RV_OK,TK_NotStart,A111,Reinforcement Fixing for Pier - Lift 1,2971,116,0,18,0,236,236,18,18,0,18,,,,2013-05-14 09:00,2013-05-15 17:00,,2013-04-28 13:00,2013-04-30 11:00,2013-04-28 13:00,2013-04-30 11:00,2013-04-28 13:00,2013-04-30 11:00,,2013-05-14 09:00,2013-05-15 17:00,,PT_Normal,,,,,Ac9eIR9aCEq+vKHl/kB8hg,Y2FXJMYbROm/j3EUxosRNA,,,N,0,0,,,2013-06-23 13:00,2013-06-23 13:00,admin,admin
386,85471,1346,11548,1473,1,0,N,N,N,CP_Phys,TT_Task,DT_FixedDrtn,RV_OK,TK_NotStart,A115,Erection of Scaffolding for Pier - Lift 2,3002,116,0,9,0,78,78,9,8,0,8,,,,2013-05-19 15:00,2013-05-20 14:00,,2013-05-04 09:00,2013-05-05 08:00,2013-05-04 09:00,2013-05-05 08:00,2013-05-04 09:00,2013-05-05 08:00,,2013-05-19 15:00,2013-05-20 14:00,,PT_Normal,,,,,gTN/XzBAMEmML8nPGBh/VQ,6m6vamSQQhm4nBltwV4wFg,,,N,0,0,,,2013-06-23 13:00,2013-06-23 13:00,admin,admin
387,85472,1346,11548,1473,1,0,N,N,N,CP_Phys,TT_Task,DT_FixedDrtn,RV_OK,TK_NotStart,A117,Reinforcement Fixing for Pier - Lift 2,2971,116,116,18,0,238,238,18,20,0,20,,,,2013-05-20 14:00,2013-05-22 12:00,,2013-05-05 08:00,2013-05-06 16:00,2013-05-05 08:00,2013-05-06 16:00,2013-05-05 08:00,2013-05-06 16:00,,2013-05-20 14:00,2013-05-22 12:00,,PT_Normal,,,,,rttaK8UPUES2SR2Dtp1d7g,nID8KcLyS++IaGudRkcmNg,,,N,0,0,,,2013-06-23 13:00,2013-06-23 13:00,admin,admin
388,85473,1346,11548,1473,1,0,N,N,N,CP_Phys,TT_Task,DT_FixedDrtn,RV_OK,TK_NotStart,A118,Formwork for Pier - Lift 2,2980,0,0,9,0,78,78,9,8,0,8,,,,2013-05-22 12:00,2013-05-25 11:00,,2013-05-22 12:00,2013-05-25 11:00,2013-05-22 12:00,2013-05-25 11:00,2013-05-22 12:00,2013-05-25 11:00,,2013-05-22 12:00,2013-05-25 11:00,,PT_Normal,,,,,K0OIPmm/rU+tm6004M8iFg,WK9zdXCGR4+wA6cO88cdBA,,,Y,0,0,,,2013-06-23 13:00,2013-06-23 13:00,admin,admin
389,85474,1346,11548,1473,1,0,N,N,N,CP_Phys,TT_Task,DT_FixedDrtn,RV_OK,TK_NotStart,A119,Concreting for Pier - Lift 2,2969,0,0,9,0,99,99,9,42,0,42,,,,2013-05-25 11:00,2013-05-26 10:00,,2013-05-25 11:00,2013-05-26 10:00,2013-05-25 11:00,2013-05-26 10:00,2013-05-25 11:00,2013-05-26 10:00,,2013-05-25 11:00,2013-05-26 10:00,,PT_Normal,,,,,ocnkT+27mk2Ahzei/XPaPQ,UhvV+q9mR325weduLmIT+g,,,Y,0,0,,,2013-06-23 13:00,2013-06-23 13:00,admin,admin
390,85475,1346,11548,1473,1,0,N,N,N,CP_Phys,TT_Task,DT_FixedDrtn,RV_OK,TK_NotStart,A120,Erection of Scaffolding for Pier - Lift 3,3002,18,0,9,0,98,98,9,8,0,8,,,,2013-05-28 08:00,2013-05-28 17:00,,2013-05-26 10:00,2013-05-27 09:00,2013-05-26 10:00,2013-05-27 09:00,2013-05-26 10:00,2013-05-27 09:00,,2013-05-28 08:00,2013-05-28 17:00,,PT_Normal,,,,,xqXVGIqAGU6p0tdt29204A,OTfjiempQdSa2sGBheehxA,,,N,0,0,,,2013-06-23 13:00,2013-06-23 13:00,admin,admin
391,85476,1346,11548,1473,1,0,N,N,N,CP_Phys,TT_Task,DT_FixedDrtn,RV_OK,TK_NotStart,A121,Reinforcement Fixing for Pier - Lift 3,2971,18,0,9,0,117,117,9,8,0,8,,,,2013-05-29 07:00,2013-05-29 16:00,,2013-05-27 09:00,2013-05-28 08:00,2013-05-27 09:00,2013-05-28 08:00,2013-05-27 09:00,2013-05-28 08:00,,2013-05-29 07:00,2013-05-29 16:00,,PT_Normal,,,,,XTs4M4ZFVkuhJGa/Zp61PQ,ySJmQiHWTU6vrd+DBrktZw,,,N,0,0,,,2013-06-23 13:00,2013-06-23 13:00,admin,admin
392,85477,1346,11548,1473,1,0,N,N,N,CP_Phys,TT_Task,DT_FixedDrtn,RV_OK,TK_NotStart,A122,Formwork for Pier - Lift 3,2980,18,0,9,0,86,86,9,8,0,8,,,,2013-05-29 16:00,2013-06-01 15:00,,2013-05-28 08:00,2013-05-28 17:00,2013-05-28 08:00,2013-05-28 17:00,2013-05-28 08:00,2013-05-28 17:00,,2013-05-29 16:00,2013-06-01 15:00,,PT_Normal,,,,,NlmIJLoZQ0WfDp9wwM5hPg,K0VH8gAIT4+f6qBmhn1woQ,,,N,0,0,,,2013-06-23 13:00,2013-06-23 13:00,admin,admin
393,85478,1346,11548,1473,1,0,N,N,N,CP_Phys,TT_Task,DT_FixedDrtn,RV_OK,TK_NotStart,A123,Concreting for Pier - Lift 3,2984,18,0,9,0,99,99,9,33,0,33,,,,2013-06-01 15:00,2013-06-02 14:00,,2013-05-29 07:00,2013-05-29 16:00,2013-05-29 07:00,2013-05-29 16:00,2013-05-29 07:00,2013-05-29 16:00,,2013-06-01 15:00,2013-06-02 14:00,,PT_Normal,,,,,K7aS0YFLV0izoRpl94mdWQ,9YdkRc6nRC+QQ7IlWpZL3w,,,N,0,0,,,2013-06-23 13:00,2013-06-23 13:00,admin,admin
394,85479,1346,11548,1473,1,0,N,N,N,CP_Phys,TT_Task,DT_FixedDrtn,RV_OK,TK_NotStart,A108,Setting Out  for Pier,2971,123,0,9,0,27,27,9,9,0,9,,,,2013-05-11 10:00,2013-05-12 09:00,,2013-04-23 07:00,2013-04-23 16:00,2013-04-23 07:00,2013-04-23 16:00,2013-04-23 07:00,2013-04-23 16:00,,2013-05-11 10:00,2013-05-12 09:00,,PT_Normal,,,,,m8lBHqJE2U+8BuxcVeqKbg,faf7D8jYRqil956MDtRPgw,,,N,0,0,,,2013-06-23 13:00,2013-06-23 13:00,admin,admin
395,85480,1346,11548,1473,1,0,N,N,N,CP_Phys,TT_Task,DT_FixedDrtn,RV_OK,TK_NotStart,A110,Reinforcement Cutting & Bending for Pier - Lift 1,,116,0,36,0,540,540,36,80,0,80,,,,2013-05-08 13:00,2013-05-14 09:00,,2013-04-23 07:00,2013-04-28 13:00,2013-04-23 07:00,2013-04-28 13:00,2013-04-23 07:00,2013-04-28 13:00,,2013-05-08 13:00,2013-05-14 09:00,,PT_Normal,,,,,HSHW3Ac+qka8Fwmfl056zA,StoRXRuGSJG5LoyQRy95Lg,,,N,0,0,,,2013-06-23 13:00,2013-06-23 13:00,admin,admin
396,85481,1346,11548,1473,1,0,N,N,N,CP_Phys,TT_Task,DT_FixedDrtn,RV_OK,TK_NotStart,A112,Reinforcement Cutting & Bending for Pier - Lift 2,2984,120,0,36,0,756,756,36,80,0,80,,,,2013-05-13 07:00,2013-05-18 13:00,,2013-04-27 07:00,2013-04-30 13:00,2013-04-27 07:00,2013-04-30 13:00,2013-04-27 07:00,2013-04-30 13:00,,2013-05-13 07:00,2013-05-18 13:00,,PT_Normal,,,,,a3UDY1HnykmMNtDWPIsuOw,krsVg7sNR16UVC0VDQF7wA,,,N,0,0,,,2013-06-23 13:00,2013-06-23 13:00,admin,admin
397,85482,1346,11548,1473,1,0,N,N,N,CP_Phys,TT_Task,DT_FixedDrtn,RV_OK,TK_NotStart,A116,Reinforcement Cutting & Bending for Pier - Lift 3,2969,120,0,36,0,756,756,36,80,0,80,,,,2013-05-15 07:00,2013-05-20 13:00,,2013-04-29 07:00,2013-05-04 13:00,2013-04-29 07:00,2013-05-04 13:00,2013-04-29 07:00,2013-05-04 13:00,,2013-05-15 07:00,2013-05-20 13:00,,PT_Normal,,,,,TvUhS73AEEi3+glF5mB8HQ,p5xWz2N3Qs+YBemgAV87mQ,,,N,0,0,,,2013-06-23 13:00,2013-06-23 13:00,admin,admin
398,85483,1346,11548,1473,1,0,N,N,N,CP_Phys,TT_Task,DT_FixedDrtn,RV_OK,TK_NotStart,A124,Removal of Formwork for Pier,2980,18,0,18,0,158,158,18,20,0,20,,,,2013-06-02 14:00,2013-06-04 12:00,,2013-05-29 16:00,2013-06-02 14:00,2013-05-29 16:00,2013-06-02 14:00,2013-05-29 16:00,2013-06-02 14:00,,2013-06-02 14:00,2013-06-04 12:00,,PT_Normal,,,,,y/PYvymld0KK04ntNDFJ/g,ZY6HNIADQYyLXYCE9eIDTg,,,N,0,0,,,2013-06-23 13:00,2013-06-23 13:00,admin,admin
399,85484,1346,11548,1473,1,0,N,N,N,CP_Phys,TT_Task,DT_FixedDrtn,RV_OK,TK_NotStart,A125,Dismantling of Complete Pier Scaffolding,,222,20,80,0,871.111112,871.111112,80,80,0,80,,,,2013-07-02 16:00,2013-07-14 16:00,,2013-06-02 14:00,2013-06-12 14:00,2013-06-02 14:00,2013-06-12 14:00,2013-06-02 14:00,2013-06-12 14:00,,2013-07-02 16:00,2013-07-14 16:00,,PT_Normal,,,,,xuONRSUHc0SY7G1Z8UK/OA,b1R2AkwWR6C8OhyFHieJuA,,,N,0,0,,,2013-06-23 13:00,2013-06-23 13:00,admin,admin
400,85485,1346,11548,1473,1,0,N,N,N,CP_Phys,TT_Task,DT_FixedDrtn,RV_OK,TK_NotStart,A126,"Application of Primer, Water Proofing Membrane & Protection Board",2971,272,0,20,0,90,90,20,0,0,0,,,,2013-07-23 16:00,2013-07-27 16:00,,2013-06-16 14:00,2013-06-18 14:00,2013-06-16 14:00,2013-06-18 14:00,2013-06-16 14:00,2013-06-18 14:00,,2013-07-23 16:00,2013-07-27 16:00,,PT_Normal,,,,,bn7q7eqG/0WhSSaxrInkCw,i13ViEHdR8O6beNR+wIIgw,,,N,0,0,,,2013-06-23 13:00,2013-06-23 13:00,admin,admin
401,85486,1346,11548,1473,1,0,N,N,N,CP_Phys,TT_Task,DT_FixedDrtn,RV_OK,TK_NotStart,A127,Application of Bitumen Mastic,2971,272,0,8,0,26,26,8,0,0,0,,,,2013-07-27 16:00,2013-07-28 14:00,,2013-06-18 14:00,2013-06-19 12:00,2013-06-18 14:00,2013-06-19 12:00,2013-06-18 14:00,2013-06-19 12:00,,2013-07-27 16:00,2013-07-28 14:00,,PT_Normal,,,,,dv8s9sdIJk+iuwaRTfP6vg,fWhn8/UTTZCY5eZ0S2hweA,,,N,0,0,,,2013-06-23 13:00,2013-06-23 13:00,admin,admin
402,85487,1346,11548,1473,1,0,N,N,N,CP_Phys,TT_Task,DT_FixedDrtn,RV_OK,TK_NotStart,A128,Concrete Screed for Balance Portion of PCC,2971,272,0,8,0,24,24,8,0,0,0,,,,2013-07-27 16:00,2013-07-28 14:00,,2013-06-18 14:00,2013-06-19 12:00,2013-06-18 14:00,2013-06-19 12:00,2013-06-18 14:00,2013-06-19 12:00,,2013-07-27 16:00,2013-07-28 14:00,,PT_Normal,,,,,sWsLYXnBQU6HemJXHgbzbQ,lq1UmZXoRXWI2McJJr8D9A,,,N,0,0,,,2013-06-23 13:00,2013-06-23 13:00,admin,admin
403,85488,1346,11548,1473,1,0,N,N,N,CP_Phys,TT_Task,DT_FixedDrtn,RV_OK,TK_NotStart,A129,Completion of Pier Construction 2 - WB - A,,272,120,8,0,0,0,8,0,0,0,,,,2013-07-27 16:00,2013-07-28 14:00,,2013-06-18 14:00,2013-06-19 12:00,2013-06-18 14:00,2013-06-19 12:00,2013-06-18 14:00,2013-06-19 12:00,,2013-07-27 16:00,2013-07-28 14:00,,PT_Normal,,,,,eWFGSwqcOEmFmB4o+3Om5g,n/ApIdmrRMCSkL74oKVcbA,,,N,0,0,,,2013-06-23 13:00,2013-06-23 13:00,admin,admin
404,85489,1346,11548,1473,1,0,N,N,N,CP_Phys,TT_Task,DT_FixedDrtn,RV_OK,TK_NotStart,A114,Concreting for Pier - Lift 1,2969,116,0,9,0,97,97,9,42,0,42,,,,2013-05-18 16:00,2013-05-19 15:00,,2013-05-01 10:00,2013-05-04 09:00,2013-05-01 10:00,2013-05-04 09:00,2013-05-01 10:00,2013-05-04 09:00,,2013-05-18 16:00,2013-05-19 15:00,,PT_Normal,,,,,Qs+cJ1x9rkm3cA4ke6r6tQ,Byil4IN/TVyedeGUAw2CVw,,,N,0,0,,,2013-06-23 13:00,2013-06-23 13:00,admin,admin
405,85490,1346,11548,1473,1,0,N,N,N,CP_Phys,TT_Task,DT_FixedDrtn,RV_OK,TK_NotStart,A113,Formwork for Pier - Lift 1,2980,116,0,9,0,77,77,9,8,0,8,,,,2013-05-18 07:00,2013-05-18 16:00,,2013-04-30 11:00,2013-05-01 10:00,2013-04-30 11:00,2013-05-01 10:00,2013-04-30 11:00,2013-05-01 10:00,,2013-05-18 07:00,2013-05-18 16:00,,PT_Normal,,,,,4imNBHOcH0CQ85rKfyAoLw,F+B1Cz56Q1K8aShiai67QQ,,,N,0,0,,,2013-06-23 13:00,2013-06-23 13:00,admin,admin
406,85491,1346,11509,1473,1,0,N,N,N,CP_Phys,TT_Task,DT_FixedDrtn,RV_OK,TK_NotStart,B1960,Approval of Backfill Material for MSE Wall,,728,0,220,0,0,0,220,0,0,0,,,,2013-12-08 16:00,2014-01-07 16:00,,2013-08-26 08:00,2013-09-25 08:00,2013-08-26 08:00,2013-09-25 08:00,2013-08-26 08:00,2013-09-25 08:00,,2013-12-08 16:00,2014-01-07 16:00,,PT_Normal,,,,,1Rzfbezo5kqVj+5Sp3wp5A,bh/36sc73USe2NdMDzC+WA,,,N,0,0,,,2013-06-23 13:00,2013-06-23 13:00,admin,admin
407,85492,1346,11509,1474,1,0,N,N,N,CP_Phys,TT_Task,DT_FixedDrtn,RV_OK,TK_NotStart,B1970,Procurment  of Backfill Material for MSE Wall,,1048,1048,80,0,0,0,80,0,0,0,,,,2014-01-07 16:00,2014-01-15 16:00,,2013-09-25 08:00,2013-10-03 08:00,2013-09-25 08:00,2013-10-03 08:00,2013-09-25 08:00,2013-10-03 08:00,,2014-01-07 16:00,2014-01-15 16:00,,PT_Normal,,,,,BQgJ4mZr9UuiH177wCbt3w,D0K48D5ask6H/cy2XhyuaA,,,N,0,0,,,2013-06-23 13:00,2013-06-23 13:00,admin,admin
408,85493,1346,11509,1473,1,80,N,N,N,CP_Phys,TT_Task,DT_FixedDrtn,RV_OK,TK_Active,B2050,Approval of MSE wall materials & Accessories for approval,,133,0,20,0,0,0,220,0,0,0,,2013-03-25 00:00,,2013-05-12 10:00,2013-05-14 10:00,,2013-04-23 07:00,2013-04-24 17:00,2013-04-23 07:00,2013-04-24 17:00,2013-04-23 07:00,2013-05-22 17:00,,2013-05-12 10:00,2013-05-14 10:00,,PT_Normal,,,,,ubO4dwpWpUSuwkEApkYdMA,vY8CPERRgUeJ1zbls3ma6Q,,,N,0,0,,,2013-06-23 13:00,2013-06-23 13:00,admin,admin
409,85494,1346,11509,1474,1,0,N,N,N,CP_Phys,TT_Task,DT_FixedDrtn,RV_OK,TK_NotStart,B2060,Procurment  MSE wall materials & Accessories,,193,184,1260,0,0,0,1260,0,0,0,,,,2013-05-27 10:00,2013-09-30 10:00,,2013-05-08 07:00,2013-09-10 17:00,2013-05-08 07:00,2013-09-10 17:00,2013-05-08 07:00,2013-09-10 17:00,,2013-05-27 10:00,2013-09-30 10:00,,PT_Normal,,,,,iEGJ3DuVCk2A38nI0MA5Pw,5ACMqtZjgECYYdXPPT5rmQ,,,N,0,0,,,2013-06-23 13:00,2013-06-23 13:00,admin,admin
410,85495,1346,11509,1473,1,0,N,N,N,CP_Phys,TT_Task,DT_FixedDrtn,RV_OK,TK_NotStart,A14040,Prepare & Submission of MSE Wall Design & Drawings,,9,0,40,0,0,0,40,0,0,0,,,,2013-08-17 07:00,2013-08-20 17:00,,2013-08-14 08:00,2013-08-20 08:00,2013-08-14 08:00,2013-08-20 08:00,2013-08-14 08:00,2013-08-20 08:00,,2013-08-17 07:00,2013-08-20 17:00,,PT_Normal,,,,,GdvTZFE7QkacVuwoCKK2aw,vkdmkWIHSyGdw/t4syzReA,,,N,0,0,,,2013-06-23 13:00,2013-06-23 13:00,admin,admin
411,85496,1346,11509,1473,1,0,N,N,N,CP_Phys,TT_Task,DT_FixedDrtn,RV_OK,TK_NotStart,A14050,Approval of MSE Wall Design & Drawings,,9,0,140,0,0,0,140,0,0,0,,,,2013-08-21 07:00,2013-09-09 17:00,,2013-08-20 08:00,2013-09-09 08:00,2013-08-20 08:00,2013-09-09 08:00,2013-08-20 08:00,2013-09-09 08:00,,2013-08-21 07:00,2013-09-09 17:00,,PT_Normal,,,,,fS/IAEUHNkeF5jueS+u8/A,GJu8RNIRSYeQoFsIPH7Tuw,,,N,0,0,,,2013-06-23 13:00,2013-06-23 13:00,admin,admin
412,85497,1346,11509,1473,1,0,N,N,N,CP_Phys,TT_Task,DT_FixedDrtn,RV_OK,TK_NotStart,A14070,Precasting of MSE Wall Pannels,2980,107,98,540,0,11340,11340,540,2700,0,2700,,,,2013-09-23 15:00,2013-12-10 15:00,,2013-09-09 08:00,2013-11-26 08:00,2013-09-09 08:00,2013-11-26 08:00,2013-09-09 08:00,2013-11-26 08:00,,2013-09-23 15:00,2013-12-10 15:00,,PT_Normal,,,,,cetjRjn43k6XIMt9dJ4uuQ,iX9iJ9L2RoSECL2iAUqOxA,,,N,0,0,,,2013-06-23 13:00,2013-06-23 13:00,admin,admin
413,85498,1346,11509,1473,1,0,N,N,N,CP_Phys,TT_Task,DT_FixedDrtn,RV_OK,TK_NotStart,A14080,Bed Prepration for MSE Wall Foundations,2971,9,0,90,0,405,405,90,90,0,90,,,,2013-09-21 13:00,2013-10-02 13:00,,2013-09-18 14:00,2013-10-01 14:00,2013-09-18 14:00,2013-10-01 14:00,2013-09-18 14:00,2013-10-01 14:00,,2013-09-21 13:00,2013-10-02 13:00,,PT_Normal,,,,,68AdAlkShEGXFDb1jGqi1g,xXBzpKo9Rj+DSrLN8Dvayw,,,N,0,0,,,2013-06-23 13:00,2013-06-23 13:00,admin,admin
414,85499,1346,11509,1473,1,0,N,N,N,CP_Phys,TT_Task,DT_FixedDrtn,RV_OK,TK_NotStart,A14090,Construction of MSE Wall,2969,9,0,495,0,8348.999996,8348.999996,495,3597.000002,0,3597.000002,,,,2013-09-30 10:00,2013-12-10 15:00,,2013-09-29 11:00,2013-12-09 16:00,2013-09-29 11:00,2013-12-09 16:00,2013-09-29 11:00,2013-12-09 16:00,,2013-09-30 10:00,2013-12-10 15:00,,PT_Normal,,,,,YL0qNu9dA0G3zwUF0tgHWQ,49RIx8RLS/aT7aOP4f47yQ,,,N,0,0,,,2013-06-23 13:00,2013-06-23 13:00,admin,admin
415,85500,1346,11509,1473,1,0,N,N,N,CP_Phys,TT_Task,DT_FixedDrtn,RV_OK,TK_NotStart,A14100,Setting Out for MSE Wall Foundations,2971,9,0,36,0,116,116,36,36,0,36,,,,2013-09-10 07:00,2013-09-15 13:00,,2013-09-09 08:00,2013-09-14 14:00,2013-09-09 08:00,2013-09-14 14:00,2013-09-09 08:00,2013-09-14 14:00,,2013-09-10 07:00,2013-09-15 13:00,,PT_Normal,,,,,wT5MHI6afUyyrn5KwFSCmA,V1iYQF/hT8eKWhH5M6WpTQ,,,N,0,0,,,2013-06-23 13:00,2013-06-23 13:00,admin,admin
416,85501,1346,11509,1473,1,0,N,N,N,CP_Phys,TT_Task,DT_FixedDrtn,RV_OK,TK_NotStart,A14110,Structural Excavation for MSE Wall Foundation,2984,9,0,40,0,220,220,40,80,0,80,,,,2013-09-15 13:00,2013-09-21 13:00,,2013-09-14 14:00,2013-09-18 14:00,2013-09-14 14:00,2013-09-18 14:00,2013-09-14 14:00,2013-09-18 14:00,,2013-09-15 13:00,2013-09-21 13:00,,PT_Normal,,,,,OWDBD3SADU+Tna9PZZEJiA,TcdzKtluSECX9P3XOXYFGw,,,N,0,0,,,2013-06-23 13:00,2013-06-23 13:00,admin,admin
417,85502,1346,11509,1473,1,0,N,N,N,CP_Phys,TT_Task,DT_FixedDrtn,RV_OK,TK_NotStart,A14120,Construction of MSE Wall Foundations,2971,9,0,80,0,3020,3020,80,800,0,800,,,,2013-09-25 13:00,2013-10-07 13:00,,2013-09-24 14:00,2013-10-06 14:00,2013-09-24 14:00,2013-10-06 14:00,2013-09-24 14:00,2013-10-06 14:00,,2013-09-25 13:00,2013-10-07 13:00,,PT_Normal,,,,,jOuWHOoja0+LybBeATv4QQ,PPWLu6cFRNyNJLl15d0NYQ,,,N,0,0,,,2013-06-23 13:00,2013-06-23 13:00,admin,admin
418,85503,1346,11509,1473,1,0,N,N,N,CP_Phys,TT_Task,DT_FixedDrtn,RV_OK,TK_NotStart,A14130,Standard Coping & Parapet Construction for MSE Wall,2970,9,0,90,0,1310.625,1310.625,90,236.25,0,236.25,,,,2013-12-10 15:00,2013-12-23 15:00,,2013-12-09 16:00,2013-12-22 16:00,2013-12-09 16:00,2013-12-22 16:00,2013-12-09 16:00,2013-12-22 16:00,,2013-12-10 15:00,2013-12-23 15:00,,PT_Normal,,,,,ONhyvYqimkyCoTZSdcC1mA,UrS4Axm1R3S//cQoMzkfSg,,,N,0,0,,,2013-06-23 13:00,2013-06-23 13:00,admin,admin
419,85504,1346,11509,1473,0,0,N,N,N,CP_Phys,TT_FinMile,DT_FixedDrtn,RV_OK,TK_NotStart,A14140,Completion of MSE Wall Constructions,,9,0,0,0,0,0,0,0,0,0,,,,2013-12-23 15:00,2013-12-23 15:00,,2013-12-22 16:00,2013-12-22 16:00,2013-12-22 16:00,2013-12-22 16:00,2013-12-22 16:00,2013-12-22 16:00,,2013-12-23 15:00,2013-12-23 15:00,,PT_Normal,,,,,cfijFqcdxkq4KeEjuZ46sQ,dOQwD4krTayQ1O2ZTHhm7Q,,,N,0,0,,,2013-06-23 13:00,2013-06-23 13:00,admin,admin
420,85505,1346,11509,1473,1,0,N,N,N,CP_Phys,TT_Task,DT_FixedDrtn,RV_OK,TK_NotStart,B1961,Prepartion & Submission for Backfill Material for Approval,,728,0,80,0,0,0,80,0,0,0,,,,2013-11-26 16:00,2013-12-08 16:00,,2013-08-14 08:00,2013-08-26 08:00,2013-08-14 08:00,2013-08-26 08:00,2013-08-14 08:00,2013-08-26 08:00,,2013-11-26 16:00,2013-12-08 16:00,,PT_Normal,,,,,P9HVYsgeYUiyMnNLLTbrWQ,6f14EHPPn0q+WgBRJKK62Q,,,N,0,0,,,2013-06-23 13:00,2013-06-23 13:00,admin,admin
421,85506,1346,11509,1473,1,100,N,N,N,CP_Phys,TT_Task,DT_FixedDrtn,RV_OK,TK_Complete,B2051,Prepartion & Submission of MSE wall materials & Accessories for approval,,,,0,0,0,0,80,0,0,0,,2013-03-13 00:00,2013-03-25 00:00,2013-05-12 10:00,2013-05-12 10:00,,2013-04-23 00:00,2013-04-23 00:00,,,2013-04-23 07:00,2013-05-04 17:00,,,,,PT_Normal,,,,,WW0i6HdTUkayqi00TVh/1Q,9C8FTY6QjkeTsTtyQZmUog,,,N,0,0,,,2013-06-23 13:00,2013-06-23 13:00,admin,admin
422,85507,1346,11509,1473,1,0,N,N,N,CP_Drtn,TT_Task,DT_FixedDUR2,RV_OK,TK_NotStart,B2052,Soil Investigation,,9,0,216,0,0,0,216,0,0,0,,,,2013-07-14 11:00,2013-08-14 17:00,,2013-07-13 12:00,2013-08-14 08:00,2013-07-13 12:00,2013-08-14 08:00,2013-07-13 12:00,2013-08-14 08:00,,2013-07-14 11:00,2013-08-14 17:00,,PT_Normal,,,,,eisx5o61/kGl7rbu1m9KyQ,,,,N,0,0,,,2013-06-23 13:00,2013-06-23 13:00,admin,admin
423,85508,1346,11509,1473,1,0,N,N,N,CP_Drtn,TT_Task,DT_FixedDUR2,RV_OK,TK_NotStart,B2053,Deployment of MSE Wall materials supplier & design subcontractor,,133,0,90,0,0,0,90,0,0,0,,,,2013-05-14 10:00,2013-05-27 10:00,,2013-04-27 07:00,2013-05-07 17:00,2013-04-27 07:00,2013-05-07 17:00,2013-04-27 07:00,2013-05-07 17:00,,2013-05-14 10:00,2013-05-27 10:00,,PT_Normal,,,,,5PQuW90O/0Cha2QbvAqsUQ,,,,N,0,0,,,2013-06-23 13:00,2013-06-23 13:00,admin,admin
424,85509,1346,11510,1473,1,0,N,N,N,CP_Phys,TT_Task,DT_FixedDrtn,RV_OK,TK_NotStart,A14840,Reinforcement Cutting & Bending for All Back Hanging Walls,2970,373,0,50,0,1650,1650,50,300,0,300,,,,2013-11-06 10:00,2013-11-13 10:00,,2013-09-16 07:00,2013-09-22 17:00,2013-09-16 07:00,2013-09-22 17:00,2013-09-16 07:00,2013-09-22 17:00,,2013-11-06 10:00,2013-11-13 10:00,,PT_Normal,,,,,dTN8OFj6XEKMEmbhBtvR7w,/N6bXIFrQ6SXUxYBPYS6Pg,,,N,0,0,,,2013-06-23 13:00,2013-06-23 13:00,admin,admin
425,85510,1346,11510,1473,1,0,N,N,N,CP_Phys,TT_Task,DT_FixedDrtn,RV_OK,TK_NotStart,A14850,Reinforecment Cutting & Bending for All Approch Slabs,2970,373,261,250,0,8750,8750,250,2500,0,2500,,,,2013-11-11 10:00,2013-12-18 10:00,,2013-09-21 07:00,2013-10-23 17:00,2013-09-21 07:00,2013-10-23 17:00,2013-09-21 07:00,2013-10-23 17:00,,2013-11-11 10:00,2013-12-18 10:00,,PT_Normal,,,,,l1gxnTz94EGwfimwsV61BQ,CjInSQE1QpO/QgWQQNzkEA,,,N,0,0,,,2013-06-23 13:00,2013-06-23 13:00,admin,admin
426,85511,1346,11510,1473,1,0,N,N,N,CP_Phys,TT_Task,DT_FixedDrtn,RV_OK,TK_NotStart,A14860,Preparation & Submission of Shop Drawings for All Back Hanging Walls,,373,0,60,0,0,0,60,0,0,0,,,,2013-10-01 10:00,2013-10-09 10:00,,2013-08-07 07:00,2013-08-18 17:00,2013-08-07 07:00,2013-08-18 17:00,2013-08-07 07:00,2013-08-18 17:00,,2013-10-01 10:00,2013-10-09 10:00,,PT_Normal,,,,,9aHaVNo/RkKv/5liWnQhSA,gdFYxmnAQTiNa0b8xnMZbQ,,,N,0,0,,,2013-06-23 13:00,2013-06-23 13:00,admin,admin
427,85512,1346,11510,1473,1,0,N,N,N,CP_Phys,TT_Task,DT_FixedDrtn,RV_OK,TK_NotStart,A14870,Preparation & Submission of Bar Schedule Drawings for All Back Hanging Walls,,373,0,60,0,0,0,60,0,0,0,,,,2013-10-09 10:00,2013-10-19 10:00,,2013-08-19 07:00,2013-08-26 17:00,2013-08-19 07:00,2013-08-26 17:00,2013-08-19 07:00,2013-08-26 17:00,,2013-10-09 10:00,2013-10-19 10:00,,PT_Normal,,,,,NA2OSMRNE0ap6sbtAPuGTw,1wfytbBpR3moWauKfOxxfg,,,N,0,0,,,2013-06-23 13:00,2013-06-23 13:00,admin,admin
428,85513,1346,11510,1473,1,0,N,N,N,CP_Phys,TT_Task,DT_FixedDrtn,RV_OK,TK_NotStart,A14880,Approval of Shop Drawings for All Back Hanging Walls,,661,549,140,0,0,0,140,0,0,0,,,,2013-11-23 08:00,2013-12-11 08:00,,2013-08-19 07:00,2013-09-07 17:00,2013-08-19 07:00,2013-09-07 17:00,2013-08-19 07:00,2013-09-07 17:00,,2013-11-23 08:00,2013-12-11 08:00,,PT_Normal,,,,,6nBopzoxQk6lqfLf9cLTbQ,mIz4WE1gTYin5Kva8+OKnQ,,,N,0,0,,,2013-06-23 13:00,2013-06-23 13:00,admin,admin
429,85514,1346,11510,1473,1,0,N,N,N,CP_Phys,TT_Task,DT_FixedDrtn,RV_OK,TK_NotStart,A14890,Approval of Bar Schedule Drawings for  All Back Hanging Walls,,373,0,140,0,0,0,140,0,0,0,,,,2013-10-19 10:00,2013-11-06 10:00,,2013-08-27 07:00,2013-09-15 17:00,2013-08-27 07:00,2013-09-15 17:00,2013-08-27 07:00,2013-09-15 17:00,,2013-10-19 10:00,2013-11-06 10:00,,PT_Normal,,,,,DzpEy1/gREGe0Xt4TLV4xQ,VN/x/PaJR/OEJIn7mRiyjA,,,N,0,0,,,2013-06-23 13:00,2013-06-23 13:00,admin,admin
430,85515,1346,11510,1473,1,0,N,N,N,CP_Phys,TT_Task,DT_FixedDrtn,RV_OK,TK_NotStart,A14900,Preparation & Submission of Shop Drawings for All Approch Slabs,,433,0,60,0,0,0,60,0,0,0,,,,2013-10-09 10:00,2013-10-19 10:00,,2013-08-07 07:00,2013-08-18 17:00,2013-08-07 07:00,2013-08-18 17:00,2013-08-07 07:00,2013-08-18 17:00,,2013-10-09 10:00,2013-10-19 10:00,,PT_Normal,,,,,NbrlapBzgkqfMDTw4MzS5w,DyqetC4CQP+rEwmEXsNetg,,,N,0,0,,,2013-06-23 13:00,2013-06-23 13:00,admin,admin
431,85516,1346,11510,1473,1,0,N,N,N,CP_Phys,TT_Task,DT_FixedDrtn,RV_OK,TK_NotStart,A14910,Preparation & Submission of Bar Schedule Drawings for All Approch Slabs,,433,0,30,0,0,0,30,0,0,0,,,,2013-10-19 10:00,2013-10-22 10:00,,2013-08-19 07:00,2013-08-21 17:00,2013-08-19 07:00,2013-08-21 17:00,2013-08-19 07:00,2013-08-21 17:00,,2013-10-19 10:00,2013-10-22 10:00,,PT_Normal,,,,,itXm8Z1Z10WIMDmDnhSXIg,NUvXI0JBRVSjEDsAdoF3aQ,,,N,0,0,,,2013-06-23 13:00,2013-06-23 13:00,admin,admin
432,85517,1346,11510,1473,1,0,N,N,N,CP_Phys,TT_Task,DT_FixedDrtn,RV_OK,TK_NotStart,A14920,Approval of Shop Drawings for All Approch Slabs,,705,593,140,0,0,0,140,0,0,0,,,,2013-11-27 12:00,2013-12-17 12:00,,2013-08-19 07:00,2013-09-07 17:00,2013-08-19 07:00,2013-09-07 17:00,2013-08-19 07:00,2013-09-07 17:00,,2013-11-27 12:00,2013-12-17 12:00,,PT_Normal,,,,,0avBhrRltESZNLvLA8ESVQ,68XVbJcOR4u4Ptw5jAGEXA,,,N,0,0,,,2013-06-23 13:00,2013-06-23 13:00,admin,admin
433,85518,1346,11510,1473,1,0,N,N,N,CP_Phys,TT_Task,DT_FixedDrtn,RV_OK,TK_NotStart,A14930,Approval of Bar Schedule Drawings for  for All Approch Slabs,,433,60,140,0,0,0,140,0,0,0,,,,2013-10-22 10:00,2013-11-11 10:00,,2013-08-24 07:00,2013-09-10 17:00,2013-08-24 07:00,2013-09-10 17:00,2013-08-24 07:00,2013-09-10 17:00,,2013-10-22 10:00,2013-11-11 10:00,,PT_Normal,,,,,lGk71p+aB0Wx1194VMjBoQ,FC1UExboSCmuziWZhISW+A,,,N,0,0,,,2013-06-23 13:00,2013-06-23 13:00,admin,admin
434,85519,1346,11517,1473,1,0,N,N,N,CP_Phys,TT_Task,DT_FixedDrtn,RV_OK,TK_NotStart,A10900,Reinforcement Fixing for Back Hanging Walls at Abutment - 1 & 2 EB,2971,0,0,9,0,85,85,9,9,0,9,,,,2013-12-21 16:00,2013-12-22 15:00,,2013-12-21 16:00,2013-12-22 15:00,2013-12-21 16:00,2013-12-22 15:00,2013-12-21 16:00,2013-12-22 15:00,,2013-12-21 16:00,2013-12-22 15:00,,PT_Normal,,,,,ik4CK73VLk+yU4da0Y1uDw,6gj36fYxQNywwe9U4SOTRA,,,Y,0,0,,,2013-06-23 13:00,2013-06-23 13:00,admin,admin
435,85520,1346,11517,1473,1,0,N,N,N,CP_Phys,TT_Task,DT_FixedDrtn,RV_OK,TK_NotStart,A10910,Formwork for Back Hanging Walls at Abutment - 1 & 2 EB,2980,0,0,9,0,54,54,9,9,0,9,,,,2013-12-22 15:00,2013-12-23 14:00,,2013-12-22 15:00,2013-12-23 14:00,2013-12-22 15:00,2013-12-23 14:00,2013-12-22 15:00,2013-12-23 14:00,,2013-12-22 15:00,2013-12-23 14:00,,PT_Normal,,,,,aApR7enR+EKbeNhCM08hng,geXhcNMYR1ajuxXI4IWpYA,,,Y,0,0,,,2013-06-23 13:00,2013-06-23 13:00,admin,admin
436,85521,1346,11517,1473,1,0,N,N,N,CP_Phys,TT_Task,DT_FixedDrtn,RV_OK,TK_NotStart,A10920,Concreting for Back Hanging Walls at Abutment - 1 & 2 EB,3001,0,0,9,0,128,128,9,36,0,36,,,,2013-12-23 14:00,2013-12-24 13:00,,2013-12-23 14:00,2013-12-24 13:00,2013-12-23 14:00,2013-12-24 13:00,2013-12-23 14:00,2013-12-24 13:00,,2013-12-23 14:00,2013-12-24 13:00,,PT_Normal,,,,,sqcV5hMIsEK2KLMOMbY+Zw,14Ix6RpMTuqOz6ddufzR9A,,,Y,0,0,,,2013-06-23 13:00,2013-06-23 13:00,admin,admin
437,85522,1346,11517,1473,1,0,N,N,N,CP_Phys,TT_Task,DT_FixedDrtn,RV_OK,TK_NotStart,A10930,Removal of Formwork for Back Hanging Walls at Abutment - 1 & 2 EB,2980,0,0,10,0,100,100,10,20,0,20,,,,2013-12-24 13:00,2013-12-25 13:00,,2013-12-24 13:00,2013-12-25 13:00,2013-12-24 13:00,2013-12-25 13:00,2013-12-24 13:00,2013-12-25 13:00,,2013-12-24 13:00,2013-12-25 13:00,,PT_Normal,,,,,Qa56SJqVjUqLffOgyEHPuA,ZOllEGjcQ7S8P0+k+hpFLg,,,Y,0,0,,,2013-06-23 13:00,2013-06-23 13:00,admin,admin
438,85523,1346,11517,1473,1,0,N,N,N,CP_Phys,TT_Task,DT_FixedDrtn,RV_OK,TK_NotStart,A10940,Blinding Concrete for Approch Slabs at EB,2981,0,0,9,0,58,58,9,9,0,9,,,,2013-12-28 13:00,2013-12-29 12:00,,2013-12-28 13:00,2013-12-29 12:00,2013-12-28 13:00,2013-12-29 12:00,2013-12-28 13:00,2013-12-29 12:00,,2013-12-28 13:00,2013-12-29 12:00,,PT_Normal,,,,,eXghkLz49Eux0HNdINoWpA,7ZeG9PR9Sd+JGBis69LXXQ,,,Y,0,0,,,2013-06-23 13:00,2013-06-23 13:00,admin,admin
439,85524,1346,11517,1473,1,0,N,N,N,CP_Phys,TT_Task,DT_FixedDrtn,RV_OK,TK_NotStart,A10950,Reinforcement Fixing for Approach Slabs,2971,0,0,9,0,76,76,9,0,0,0,,,,2013-12-29 12:00,2013-12-30 11:00,,2013-12-29 12:00,2013-12-30 11:00,2013-12-29 12:00,2013-12-30 11:00,2013-12-29 12:00,2013-12-30 11:00,,2013-12-29 12:00,2013-12-30 11:00,,PT_Normal,,,,,xGZ4/2Ctzk67L4bBSixmvg,PRmGufxUR2ae8zSZPmp9NQ,,,Y,0,0,,,2013-06-23 13:00,2013-06-23 13:00,admin,admin
440,85525,1346,11517,1473,1,0,N,N,N,CP_Phys,TT_Task,DT_FixedDrtn,RV_OK,TK_NotStart,A10960,Side Shutters for Approach Slabs,2980,0,0,9,0,54,54,9,9,0,9,,,,2013-12-30 11:00,2013-12-31 10:00,,2013-12-30 11:00,2013-12-31 10:00,2013-12-30 11:00,2013-12-31 10:00,2013-12-30 11:00,2013-12-31 10:00,,2013-12-30 11:00,2013-12-31 10:00,,PT_Normal,,,,,/Nd7gxtYokmFNqtRAmbGiQ,zJvT4toWS4yftFe+EqRFcw,,,Y,0,0,,,2013-06-23 13:00,2013-06-23 13:00,admin,admin
441,85526,1346,11517,1473,1,0,N,N,N,CP_Phys,TT_Task,DT_FixedDrtn,RV_OK,TK_NotStart,A10970,Concreting for Approach Slabs,3001,0,0,9,0,137,137,9,45,0,45,,,,2013-12-31 10:00,2014-01-01 09:00,,2013-12-31 10:00,2014-01-01 09:00,2013-12-31 10:00,2014-01-01 09:00,2013-12-31 10:00,2014-01-01 09:00,,2013-12-31 10:00,2014-01-01 09:00,,PT_Normal,,,,,cZqNwAtCvUKz6PY3rc5EPg,GBuBaw6ySbSYQPUiYH0PfA,,,Y,0,0,,,2013-06-23 13:00,2013-06-23 13:00,admin,admin
442,85527,1346,11517,1473,1,0,N,N,N,CP_Phys,TT_Task,DT_FixedDrtn,RV_OK,TK_NotStart,A10980,Removal of Approch Slab Side Shutters,2980,0,0,10,0,120,120,10,20,0,20,,,,2014-01-01 09:00,2014-01-04 09:00,,2014-01-01 09:00,2014-01-04 09:00,2014-01-01 09:00,2014-01-04 09:00,2014-01-01 09:00,2014-01-04 09:00,,2014-01-01 09:00,2014-01-04 09:00,,PT_Normal,,,,,+3aDM/dT4Ua9ErtvLEStFQ,57uWj5Y7T+WGGnBV44EgEA,,,Y,0,0,,,2013-06-23 13:00,2013-06-23 13:00,admin,admin
443,85528,1346,11517,1473,1,0,N,N,N,CP_Phys,TT_Task,DT_FixedDrtn,RV_OK,TK_NotStart,A10990,Granular Back Fill at Hanging Wall,2984,0,0,10,0,376.666667,376.666667,10,180,0,180,,,,2013-12-25 13:00,2013-12-28 13:00,,2013-12-25 13:00,2013-12-28 13:00,2013-12-25 13:00,2013-12-28 13:00,2013-12-25 13:00,2013-12-28 13:00,,2013-12-25 13:00,2013-12-28 13:00,,PT_Normal,,,,,YwuiSe5xu02KfXF4FLAoAA,thSMcQjZRZObaNAjLonVUQ,,,Y,0,0,,,2013-06-23 13:00,2013-06-23 13:00,admin,admin
444,85529,1346,11517,1473,1,0,N,N,N,CP_Phys,TT_Task,DT_FixedDrtn,RV_OK,TK_NotStart,A11000,Completion of Approach Slab Construction - East Bound,,0,0,8,0,0,0,8,0,0,0,,,,2014-01-01 11:00,2014-01-04 09:00,,2014-01-01 11:00,2014-01-04 09:00,2014-01-01 11:00,2014-01-04 09:00,2014-01-01 11:00,2014-01-04 09:00,,2014-01-01 11:00,2014-01-04 09:00,,PT_Normal,,,,,+jWDW8TymUW5mWmqiYXwdg,kN+Xu+6pTACyJ7mbnhvcuw,,,Y,0,0,,,2013-06-23 13:00,2013-06-23 13:00,admin,admin
445,85530,1346,11527,1473,1,0,N,N,N,CP_Phys,TT_Task,DT_FixedDrtn,RV_OK,TK_NotStart,A12840,Reinforcement Fixing for Back Hanging Walls at Abutment - 1 & 2 WB,2971,112,0,8,0,88,88,8,8,0,8,,,,2013-12-11 08:00,2013-12-11 16:00,,2013-11-25 16:00,2013-11-26 14:00,2013-11-25 16:00,2013-11-26 14:00,2013-11-25 16:00,2013-11-26 14:00,,2013-12-11 08:00,2013-12-11 16:00,,PT_Normal,,,,,o30sbrLJ8029sc8GVGwtRA,t9B5AUOwTsq9SfkhyRXsug,,,N,0,0,,,2013-06-23 13:00,2013-06-23 13:00,admin,admin
446,85531,1346,11527,1473,1,0,N,N,N,CP_Phys,TT_Task,DT_FixedDrtn,RV_OK,TK_NotStart,A12850,Formwork for Back Hanging Walls at Abutment - 1 & 2 WB,2980,112,0,8,0,40,40,8,8,0,8,,,,2013-12-11 16:00,2013-12-14 14:00,,2013-11-26 14:00,2013-11-27 12:00,2013-11-26 14:00,2013-11-27 12:00,2013-11-26 14:00,2013-11-27 12:00,,2013-12-11 16:00,2013-12-14 14:00,,PT_Normal,,,,,gFYEmzDIZkK3Jt8aSRKa+g,/OjLx5uuR/aaH0TEZmYdQA,,,N,0,0,,,2013-06-23 13:00,2013-06-23 13:00,admin,admin
447,85532,1346,11527,1473,1,0,N,N,N,CP_Phys,TT_Task,DT_FixedDrtn,RV_OK,TK_NotStart,A12860,Concreting for Back Hanging Walls at Abutment - 1 & 2 WB,2984,112,0,8,0,126,126,8,32,0,32,,,,2013-12-14 14:00,2013-12-15 12:00,,2013-11-27 12:00,2013-11-30 10:00,2013-11-27 12:00,2013-11-30 10:00,2013-11-27 12:00,2013-11-30 10:00,,2013-12-14 14:00,2013-12-15 12:00,,PT_Normal,,,,,Jxk0zO9X2E6AS4yLRWiFcA,b3IQ1tZqSRyD8LpxlBrlfw,,,N,0,0,,,2013-06-23 13:00,2013-06-23 13:00,admin,admin
448,85533,1346,11527,1473,1,0,N,N,N,CP_Phys,TT_Task,DT_FixedDrtn,RV_OK,TK_NotStart,A12870,Removal of Formwork for Back Hanging Walls at Abutment - 1 & 2 WB,2980,112,0,10,0,120,120,10,20,0,20,,,,2013-12-15 12:00,2013-12-16 12:00,,2013-11-30 10:00,2013-12-01 10:00,2013-11-30 10:00,2013-12-01 10:00,2013-11-30 10:00,2013-12-01 10:00,,2013-12-15 12:00,2013-12-16 12:00,,PT_Normal,,,,,ctMRiTI4YUOKtIgrLeARHg,UO9TaklmTOyeBPjD2G0tqA,,,N,0,0,,,2013-06-23 13:00,2013-06-23 13:00,admin,admin
449,85534,1346,11527,1473,1,0,N,N,N,CP_Phys,TT_Task,DT_FixedDrtn,RV_OK,TK_NotStart,A12880,Blinding Concrete for Approch Slabs at WB,2981,112,0,8,0,56,56,8,8,0,8,,,,2013-12-17 12:00,2013-12-18 10:00,,2013-12-02 10:00,2013-12-03 08:00,2013-12-02 10:00,2013-12-03 08:00,2013-12-02 10:00,2013-12-03 08:00,,2013-12-17 12:00,2013-12-18 10:00,,PT_Normal,,,,,h7L7Uqy6cUOq3qe3+2j8tg,vcTDv0zwS1Cn6p+zGGiFxA,,,N,0,0,,,2013-06-23 13:00,2013-06-23 13:00,admin,admin
450,85535,1346,11527,1473,1,0,N,N,N,CP_Phys,TT_Task,DT_FixedDrtn,RV_OK,TK_NotStart,A12890,Reinforcement Fixing for Approach Slabs,2971,112,0,9,0,76,76,9,9,0,9,,,,2013-12-18 10:00,2013-12-21 09:00,,2013-12-03 08:00,2013-12-03 17:00,2013-12-03 08:00,2013-12-03 17:00,2013-12-03 08:00,2013-12-03 17:00,,2013-12-18 10:00,2013-12-21 09:00,,PT_Normal,,,,,P80uXjt/WEipAAZESaZ5KQ,Bqx8u12/QlGFX8WFPI+hMQ,,,N,0,0,,,2013-06-23 13:00,2013-06-23 13:00,admin,admin
451,85536,1346,11527,1473,1,0,N,N,N,CP_Phys,TT_Task,DT_FixedDrtn,RV_OK,TK_NotStart,A12900,Side Shutters for Approach Slabs,2980,112,0,8,0,48,48,8,8,0,8,,,,2013-12-21 09:00,2013-12-21 17:00,,2013-12-04 07:00,2013-12-04 15:00,2013-12-04 07:00,2013-12-04 15:00,2013-12-04 07:00,2013-12-04 15:00,,2013-12-21 09:00,2013-12-21 17:00,,PT_Normal,,,,,A3jWPw+8y0uvlkf4T2c7Yg,XJ/PZ8KgS0muKhGVnZgvEA,,,N,0,0,,,2013-06-23 13:00,2013-06-23 13:00,admin,admin
452,85537,1346,11527,1473,1,0,N,N,N,CP_Phys,TT_Task,DT_FixedDrtn,RV_OK,TK_NotStart,A12910,Concreting for Approach Slabs,3001,112,0,8,0,134,134,8,40,0,40,,,,2013-12-22 07:00,2013-12-22 15:00,,2013-12-04 15:00,2013-12-07 13:00,2013-12-04 15:00,2013-12-07 13:00,2013-12-04 15:00,2013-12-07 13:00,,2013-12-22 07:00,2013-12-22 15:00,,PT_Normal,,,,,Wjrd4UafXUiUEHdgHaI9xg,6AyNrTDbQ1qU1RGKjCLA9Q,,,N,0,0,,,2013-06-23 13:00,2013-06-23 13:00,admin,admin
453,85538,1346,11527,1473,1,0,N,N,N,CP_Phys,TT_Task,DT_FixedDrtn,RV_OK,TK_NotStart,A12920,Removal of Approch Slab Side Shutters,2980,112,0,10,0,100,100,10,10,0,10,,,,2013-12-22 15:00,2013-12-23 15:00,,2013-12-07 13:00,2013-12-08 13:00,2013-12-07 13:00,2013-12-08 13:00,2013-12-07 13:00,2013-12-08 13:00,,2013-12-22 15:00,2013-12-23 15:00,,PT_Normal,,,,,eMO/tYmttE6CjAbUN1MT/w,j2pCYaZCQie1AGYj0XpUHg,,,N,0,0,,,2013-06-23 13:00,2013-06-23 13:00,admin,admin
454,85539,1346,11527,1473,1,0,N,N,N,CP_Phys,TT_Task,DT_FixedDrtn,RV_OK,TK_NotStart,A12930,Granular Back Fill at Hanging Wall,3001,112,0,10,0,390,390,10,180,0,180,,,,2013-12-16 12:00,2013-12-17 12:00,,2013-12-01 10:00,2013-12-02 10:00,2013-12-01 10:00,2013-12-02 10:00,2013-12-01 10:00,2013-12-02 10:00,,2013-12-16 12:00,2013-12-17 12:00,,PT_Normal,,,,,mUCz1kFMVkiUPztSppX7lw,rscCNcLgScmrpuMKTl0KyA,,,N,0,0,,,2013-06-23 13:00,2013-06-23 13:00,admin,admin
455,85540,1346,11527,1473,1,0,N,N,N,CP_Phys,TT_Task,DT_FixedDrtn,RV_OK,TK_NotStart,A12940,Completion of Approach Slab Construction - West Bound,,112,103,8,0,0,0,8,0,0,0,,,,2013-12-23 07:00,2013-12-23 15:00,,2013-12-07 15:00,2013-12-08 13:00,2013-12-07 15:00,2013-12-08 13:00,2013-12-07 15:00,2013-12-08 13:00,,2013-12-23 07:00,2013-12-23 15:00,,PT_Normal,,,,,eIbiNl5ssEOVkndDLe9Rzg,iMsfDbq6RhiNvY+Xnt9pcQ,,,N,0,0,,,2013-06-23 13:00,2013-06-23 13:00,admin,admin
456,85541,1346,11529,1473,1,0,N,N,N,CP_Phys,TT_Task,DT_FixedDrtn,RV_OK,TK_NotStart,A13,Prepare and Submission for Bridge Load Testing Subcontractor,,988,0,140,0,0,0,140,0,0,0,,,,2013-10-22 15:00,2013-11-11 15:00,,2013-06-04 07:00,2013-06-23 17:00,2013-06-04 07:00,2013-06-23 17:00,2013-06-04 07:00,2013-06-23 17:00,,2013-10-22 15:00,2013-11-11 15:00,,PT_Normal,,,,,IqKyP3sEKEeMs9bxYC1PdQ,T4kMohliSUiQ3HhIeCO4WA,,,N,0,0,,,2013-06-23 13:00,2013-06-23 13:00,admin,admin
457,85542,1346,11529,1473,1,0,N,N,N,CP_Phys,TT_Task,DT_FixedDrtn,RV_OK,TK_NotStart,A14,Approval of Bridge Load Testing Subcontractor,,988,0,140,0,0,0,140,0,0,0,,,,2013-11-11 15:00,2013-12-03 15:00,,2013-06-24 07:00,2013-07-13 17:00,2013-06-24 07:00,2013-07-13 17:00,2013-06-24 07:00,2013-07-13 17:00,,2013-11-11 15:00,2013-12-03 15:00,,PT_Normal,,,,,MSPON+BlAEmTsrN4GhfBtw,qGkeb2TBT+KyeT4CO0D+Fg,,,N,0,0,,,2013-06-23 13:00,2013-06-23 13:00,admin,admin
458,85543,1346,11529,1473,1,0,N,N,N,CP_Phys,TT_Task,DT_FixedDrtn,RV_OK,TK_NotStart,A15,Appointment of Bridge Load Testing Subcontractors,,988,0,120,0,0,0,120,0,0,0,,,,2013-12-03 15:00,2013-12-21 15:00,,2013-07-14 07:00,2013-07-29 17:00,2013-07-14 07:00,2013-07-29 17:00,2013-07-14 07:00,2013-07-29 17:00,,2013-12-03 15:00,2013-12-21 15:00,,PT_Normal,,,,,BS8yaBT0T0S5jtou1In8OQ,ixETBrZvQUaIFj11CUgS3Q,,,N,0,0,,,2013-06-23 13:00,2013-06-23 13:00,admin,admin
459,85544,1346,11520,1473,1,100,N,N,N,CP_Phys,TT_Task,DT_FixedDrtn,RV_OK,TK_Complete,A10,Prepare and Submission for Prestressing Subcontractor,,,,0,0,0,0,140,0,0,0,,2013-02-02 07:00,2013-02-19 00:00,2013-06-25 11:00,2013-06-25 11:00,,2013-06-03 17:00,2013-06-03 17:00,,,2013-02-02 07:00,2013-02-19 17:00,,,,,PT_Normal,,,,,YhY+PCFy9Uy3hzsrZWzb/A,FLds1typQVyVH2b87mOGiw,,,N,0,0,,,2013-06-23 13:00,2013-06-23 13:00,admin,admin
460,85545,1346,11520,1473,1,0,N,N,N,CP_Phys,TT_Task,DT_FixedDrtn,RV_OK,TK_NotStart,A11,Approval of Prestressing Subcontractor,,154,0,140,0,0,0,140,0,0,0,,,,2013-06-25 11:00,2013-07-15 11:00,,2013-06-04 07:00,2013-06-23 17:00,2013-06-04 07:00,2013-06-23 17:00,2013-06-04 07:00,2013-06-23 17:00,,2013-06-25 11:00,2013-07-15 11:00,,PT_Normal,,,,,+LEDDD+oPUepZL0D9UJTOA,Jnwz2IQ4TgmA2RmSYMuCZw,,,N,0,0,,,2013-06-23 13:00,2013-06-23 13:00,admin,admin
461,85546,1346,11520,1473,1,0,N,N,N,CP_Phys,TT_Task,DT_FixedDrtn,RV_OK,TK_NotStart,A12,Appointment of Prestressing Subcontractor,,154,42,300,0,0,0,300,0,0,0,,,,2013-07-15 11:00,2013-08-28 11:00,,2013-06-24 07:00,2013-08-04 17:00,2013-06-24 07:00,2013-08-04 17:00,2013-06-24 07:00,2013-08-04 17:00,,2013-07-15 11:00,2013-08-28 11:00,,PT_Normal,,,,,d/mGrXAVQ0yAV18fShgeOA,pvGhkD5JTuarpWabQDBMqg,,,N,0,0,,,2013-06-23 13:00,2013-06-23 13:00,admin,admin
462,85547,1346,11521,1473,1,0,N,N,N,CP_Phys,TT_Task,DT_FixedDrtn,RV_OK,TK_NotStart,A7,Prepare and Submission of Soil Investigantion Subconractor for MSE wall,,9,0,210,0,0,0,210,0,0,0,,,,2013-05-06 16:00,2013-06-04 16:00,,2013-05-06 07:00,2013-06-03 17:00,2013-05-06 07:00,2013-06-03 17:00,2013-05-06 07:00,2013-06-03 17:00,,2013-05-06 16:00,2013-06-04 16:00,,PT_Normal,,,,,RWPiGJUxF0+rdelwFKqJjQ,AVAffWEiTFejfsxmPLosUg,,,N,0,0,,,2013-06-23 13:00,2013-06-23 13:00,admin,admin
463,85548,1346,11521,1473,1,0,N,N,N,CP_Phys,TT_Task,DT_FixedDrtn,RV_OK,TK_NotStart,A8,Approval of Soil Investigantion Subconractor for MSE wall,,9,0,230,0,0,0,230,0,0,0,,,,2013-06-04 16:00,2013-07-07 16:00,,2013-06-04 07:00,2013-07-06 17:00,2013-06-04 07:00,2013-07-06 17:00,2013-06-04 07:00,2013-07-06 17:00,,2013-06-04 16:00,2013-07-07 16:00,,PT_Normal,,,,,yh3mbqv2SUG/ro8qD9Q6RQ,8tAGMoIRRsmGEF/sLaCZHA,,,N,0,0,,,2013-06-23 13:00,2013-06-23 13:00,admin,admin
464,85549,1346,11521,1473,1,0,N,N,N,CP_Phys,TT_Task,DT_FixedDrtn,RV_OK,TK_NotStart,A9,Appointment of Soil Investigantion Subconractor for MSE wall,,9,0,45,0,0,0,45,0,0,0,,,,2013-07-07 16:00,2013-07-14 11:00,,2013-07-07 07:00,2013-07-13 12:00,2013-07-07 07:00,2013-07-13 12:00,2013-07-07 07:00,2013-07-13 12:00,,2013-07-07 16:00,2013-07-14 11:00,,PT_Normal,,,,,DCAnQO/+JUWFOhrwLXf87Q,VfG7LXYXRqSWzc6kJDj7HA,,,N,0,0,,,2013-06-23 13:00,2013-06-23 13:00,admin,admin
465,85550,1346,11528,1473,1,0,N,N,N,CP_Phys,TT_Task,DT_FixedDrtn,RV_OK,TK_NotStart,B3180,MIR for Bearing Pads,,1310,1198,20,0,0,0,20,0,0,0,,,,2013-12-18 07:00,2013-12-21 17:00,,2013-06-12 07:00,2013-06-15 17:00,2013-06-12 07:00,2013-06-15 17:00,2013-06-12 07:00,2013-06-15 17:00,,2013-12-18 07:00,2013-12-21 17:00,,PT_Normal,,,,,DrigRSJjQ0aDhGxxKdzkeA,QTD8DJqc4Emz4RcI3PrBQA,,,N,0,0,,,2013-06-23 13:00,2013-06-23 13:00,admin,admin
466,85551,1346,11528,1473,1,0,N,N,N,CP_Phys,TT_Task,DT_FixedDrtn,RV_OK,TK_NotStart,B3190,MAR for Bearing Pads,,1310,0,220,0,0,0,220,0,0,0,,,,2013-11-06 07:00,2013-12-09 17:00,,2013-05-05 07:00,2013-06-03 17:00,2013-05-05 07:00,2013-06-03 17:00,2013-05-05 07:00,2013-06-03 17:00,,2013-11-06 07:00,2013-12-09 17:00,,PT_Normal,,,,,7631FcouBE23CRNHxbI6+Q,3YXNCxrJz0C9SKq+yASqaA,,,N,0,0,,,2013-06-23 13:00,2013-06-23 13:00,admin,admin
467,85552,1346,11528,1474,1,0,N,N,N,CP_Phys,TT_Task,DT_FixedDrtn,RV_OK,TK_NotStart,B3200,Procurment  for Bearing Pads,,1890,0,80,0,0,0,80,0,0,0,,,,2013-12-10 07:00,2013-12-17 17:00,,2013-06-04 07:00,2013-06-11 17:00,2013-06-04 07:00,2013-06-11 17:00,2013-06-04 07:00,2013-06-11 17:00,,2013-12-10 07:00,2013-12-17 17:00,,PT_Normal,,,,,Tp4s8A8gIkCCr4NMqMALhA,hmDHdR9sE06ptf9qnSE+5w,,,N,0,0,,,2013-06-23 13:00,2013-06-23 13:00,admin,admin
468,85553,1346,11528,1473,1,0,N,N,N,CP_Phys,TT_Task,DT_FixedDrtn,RV_OK,TK_NotStart,B1290,MIR for Precast Curbs (Mountable and Non Mountable),,1091,904,20,0,0,0,20,0,0,0,,,,2013-11-18 08:00,2013-11-24 08:00,,2013-06-16 07:00,2013-06-17 17:00,2013-06-16 07:00,2013-06-17 17:00,2013-06-16 07:00,2013-06-17 17:00,,2013-11-18 08:00,2013-11-24 08:00,,PT_Normal,,,,,4iyGxE8ydEi9o7BSVM1FBg,Hke26hKEDEmTh/KlT/05RQ,,,N,0,0,,,2013-06-23 13:00,2013-06-23 13:00,admin,admin
469,85554,1346,11528,1473,1,50,N,N,N,CP_Phys,TT_Task,DT_FixedDrtn,RV_OK,TK_Active,B1490,MAR for Precast Curbs (Mountable and Non Mountable),,1091,0,300,0,0,0,220,0,0,0,,2013-03-20 00:00,,2013-09-25 08:00,2013-11-06 08:00,,2013-04-23 07:00,2013-06-03 17:00,2013-04-23 07:00,2013-06-03 17:00,2013-02-18 07:00,2013-03-19 17:00,,2013-09-25 08:00,2013-11-06 08:00,,PT_Normal,,,,,ad5do7NeakubtWs/NzAJ8Q,oY3aFm7LxUGSyygeJAGjyg,,,N,0,0,,,2013-06-23 13:00,2013-06-23 13:00,admin,admin
470,85555,1346,11528,1473,1,0,N,N,N,CP_Phys,TT_Task,DT_FixedDrtn,RV_OK,TK_NotStart,B1500,Procurment  for Precast Curbs (Mountable and Non Mountable),,1091,0,80,0,0,0,80,0,0,0,,,,2013-11-06 08:00,2013-11-18 08:00,,2013-06-04 07:00,2013-06-15 17:00,2013-06-04 07:00,2013-06-15 17:00,2013-06-04 07:00,2013-06-15 17:00,,2013-11-06 08:00,2013-11-18 08:00,,PT_Normal,,,,,5ANXV2v8/Uquli79n6S9kg,Vp4zhIWkjUaEGhQirQ86SQ,,,N,0,0,,,2013-06-23 13:00,2013-06-23 13:00,admin,admin
471,85556,1346,11528,1473,1,0,N,N,N,CP_Phys,TT_Task,DT_FixedDrtn,RV_OK,TK_NotStart,B1540,MIR for Precast Concrete Tile (60 mm thick),,1171,1059,20,0,0,0,20,0,0,0,,,,2013-11-30 08:00,2013-12-02 08:00,,2013-06-12 07:00,2013-06-15 17:00,2013-06-12 07:00,2013-06-15 17:00,2013-06-12 07:00,2013-06-15 17:00,,2013-11-30 08:00,2013-12-02 08:00,,PT_Normal,,,,,QBirGuXDX0SYDd/aYHm0kg,RC/8a9YQ5EO5lwGvI4vH0A,,,N,0,0,,,2013-06-23 13:00,2013-06-23 13:00,admin,admin
472,85557,1346,11528,1473,1,80,N,N,N,CP_Phys,TT_Task,DT_FixedDrtn,RV_OK,TK_Active,B1550,MAR for Precast Concrete Tile (60 mm thick),,1180,0,300,0,0,0,220,0,0,0,,2013-03-20 00:00,,2013-10-08 07:00,2013-11-18 17:00,,2013-04-23 07:00,2013-06-03 17:00,2013-04-23 07:00,2013-06-03 17:00,2013-02-18 07:00,2013-03-19 17:00,,2013-10-08 07:00,2013-11-18 17:00,,PT_Normal,,,,,Uam5C431gEGPJ/WLN+C6+w,lwwXwWZPmESONqtH268EeA,,,N,0,0,,,2013-06-23 13:00,2013-06-23 13:00,admin,admin
473,85558,1346,11528,1474,1,0,N,N,N,CP_Phys,TT_Task,DT_FixedDrtn,RV_OK,TK_NotStart,B1560,Procurment  for Precast Concrete Tile (60 mm thick),,1711,0,80,0,0,0,80,0,0,0,,,,2013-11-22 08:00,2013-11-30 08:00,,2013-06-04 07:00,2013-06-11 17:00,2013-06-04 07:00,2013-06-11 17:00,2013-06-04 07:00,2013-06-11 17:00,,2013-11-22 08:00,2013-11-30 08:00,,PT_Normal,,,,,EbFeSv77OkyO9A9GAA+l8A,yPbWPs5BdUiwxt6hHSGW2A,,,N,0,0,,,2013-06-23 13:00,2013-06-23 13:00,admin,admin
474,85559,1346,11528,1473,1,0,N,N,N,CP_Phys,TT_Task,DT_FixedDrtn,RV_OK,TK_NotStart,B3090,MIR for Bearings,,196,22,20,0,0,0,20,0,0,0,,,,2013-08-12 13:00,2013-08-14 13:00,,2013-07-14 07:00,2013-07-15 17:00,2013-07-14 07:00,2013-07-15 17:00,2013-07-14 07:00,2013-07-15 17:00,,2013-08-12 13:00,2013-08-14 13:00,,PT_Normal,,,,,+mNH4J4nTkm6b9IcKB+jLg,SeLqJwgYh0al5UD1ZBaOkw,,,N,0,0,,,2013-06-23 13:00,2013-06-23 13:00,admin,admin
475,85560,1346,11528,1473,1,80,N,N,N,CP_Phys,TT_Task,DT_FixedDrtn,RV_OK,TK_Active,B3100,MAR for Bearings,,216,0,300,0,0,0,220,0,0,0,,2013-03-26 00:00,,2013-05-22 13:00,2013-07-03 13:00,,2013-04-23 07:00,2013-06-03 17:00,2013-04-23 07:00,2013-06-03 17:00,2012-12-23 07:00,2013-01-21 17:00,,2013-05-22 13:00,2013-07-03 13:00,,PT_Normal,,,,,AOzeWFt770qE3G3pl0uZLQ,V8+qPg/AeUG3edRDi5UiJg,,,N,0,0,,,2013-06-23 13:00,2013-06-23 13:00,admin,admin
476,85561,1346,11528,1474,1,0,N,N,N,CP_Phys,TT_Task,DT_FixedDrtn,RV_OK,TK_NotStart,B3110,Procurment  for Bearings,,296,0,400,0,0,0,400,0,0,0,,,,2013-07-03 13:00,2013-08-12 13:00,,2013-06-04 07:00,2013-07-13 17:00,2013-06-04 07:00,2013-07-13 17:00,2013-06-04 07:00,2013-07-13 17:00,,2013-07-03 13:00,2013-08-12 13:00,,PT_Normal,,,,,LlDBZAJNGUyO72MWKzrvPA,8h6iq8QnUU2UphOYJl0Ueg,,,N,0,0,,,2013-06-23 13:00,2013-06-23 13:00,admin,admin
477,85562,1346,11528,1473,1,0,N,N,N,CP_Phys,TT_Task,DT_FixedDrtn,RV_OK,TK_NotStart,B3120,MIR for Epoxy Grout,,486,342,20,0,0,0,20,0,0,0,,,,2013-08-17 13:00,2013-08-19 13:00,,2013-06-08 07:00,2013-06-09 17:00,2013-06-08 07:00,2013-06-09 17:00,2013-06-08 07:00,2013-06-09 17:00,,2013-08-17 13:00,2013-08-19 13:00,,PT_Normal,,,,,o9P85WTLuESPAGJzg+uIDw,QTD8DJqc4Emz4RcI3PrBQA,,,N,0,0,,,2013-06-23 13:00,2013-06-23 13:00,admin,admin
478,85563,1346,11528,1473,1,0,N,N,N,CP_Phys,TT_Task,DT_FixedDrtn,RV_OK,TK_NotStart,B3130,MAR for Epoxy Grout,,486,0,220,0,0,0,220,0,0,0,,,,2013-07-10 13:00,2013-08-13 13:00,,2013-05-05 07:00,2013-06-03 17:00,2013-05-05 07:00,2013-06-03 17:00,2013-05-05 07:00,2013-06-03 17:00,,2013-07-10 13:00,2013-08-13 13:00,,PT_Normal,,,,,4CWxHztLrkuU8dsuArPu9Q,3YXNCxrJz0C9SKq+yASqaA,,,N,0,0,,,2013-06-23 13:00,2013-06-23 13:00,admin,admin
479,85564,1346,11528,1474,1,0,N,N,N,CP_Phys,TT_Task,DT_FixedDrtn,RV_OK,TK_NotStart,B3140,Procurment  for Epoxy Grout,,706,0,40,0,0,0,40,0,0,0,,,,2013-08-13 13:00,2013-08-17 13:00,,2013-06-04 07:00,2013-06-07 17:00,2013-06-04 07:00,2013-06-07 17:00,2013-06-04 07:00,2013-06-07 17:00,,2013-08-13 13:00,2013-08-17 13:00,,PT_Normal,,,,,jtMWWLqxRkSN8vgM9vWIvA,hmDHdR9sE06ptf9qnSE+5w,,,N,0,0,,,2013-06-23 13:00,2013-06-23 13:00,admin,admin
480,85565,1346,11528,1473,1,0,N,N,N,CP_Phys,TT_Task,DT_FixedDrtn,RV_OK,TK_NotStart,B3150,MIR for Rubberized Bitumen emulsion,,667,515,20,0,0,0,20,0,0,0,,,,2013-07-28 14:00,2013-07-30 14:00,,2013-04-27 07:00,2013-04-28 17:00,2013-04-27 07:00,2013-04-28 17:00,2013-04-27 07:00,2013-04-28 17:00,,2013-07-28 14:00,2013-07-30 14:00,,PT_Normal,,,,,ppFoYcMt9USguCS8z7hubw,QTD8DJqc4Emz4RcI3PrBQA,,,N,0,0,,,2013-06-23 13:00,2013-06-23 13:00,admin,admin
481,85566,1346,11528,1473,1,100,N,N,N,CP_Phys,TT_Task,DT_FixedDrtn,RV_OK,TK_Complete,B3160,MAR for Rubberized Bitumen emulsion,,,,0,0,0,0,220,0,0,0,,2013-01-29 00:00,2013-03-05 00:00,2013-07-25 14:00,2013-07-25 14:00,,2013-04-23 00:00,2013-04-23 00:00,,,2012-12-29 07:00,2013-01-27 17:00,,,,,PT_Normal,,,,,dG28rM+nw0C6aiDmbcd3kw,3YXNCxrJz0C9SKq+yASqaA,,,N,0,0,,,2013-06-23 13:00,2013-06-23 13:00,admin,admin
482,85567,1346,11528,1474,1,0,N,N,N,CP_Phys,TT_Task,DT_FixedDrtn,RV_OK,TK_NotStart,B3170,Procurment  for Rubberized Bitumen emulsion,,937,10,30,0,0,0,30,0,0,0,,,,2013-07-25 14:00,2013-07-28 14:00,,2013-04-23 07:00,2013-04-25 17:00,2013-04-23 07:00,2013-04-25 17:00,2013-04-23 07:00,2013-04-25 17:00,,2013-07-25 14:00,2013-07-28 14:00,,PT_Normal,,,,,YkgDeAcCVkC/fXtOn5/S5A,hmDHdR9sE06ptf9qnSE+5w,,,N,0,0,,,2013-06-23 13:00,2013-06-23 13:00,admin,admin
483,85568,1346,11528,1473,1,0,N,N,N,CP_Phys,TT_Task,DT_FixedDrtn,RV_OK,TK_NotStart,B3420,MIR for Bridge Deck Water Proofing (iso-cyaniteamin system - 2 mm thick),,942,810,20,0,0,0,20,0,0,0,,,,2013-10-26 09:00,2013-10-28 09:00,,2013-06-12 07:00,2013-06-15 17:00,2013-06-12 07:00,2013-06-15 17:00,2013-06-12 07:00,2013-06-15 17:00,,2013-10-26 09:00,2013-10-28 09:00,,PT_Normal,,,,,Um14HvItZ0ytlpdeFRHrng,TTGP1Ah44k6e9oYivt7D4A,,,N,0,0,,,2013-06-23 13:00,2013-06-23 13:00,admin,admin
484,85569,1346,11528,1473,1,0,N,N,N,CP_Phys,TT_Task,DT_FixedDrtn,RV_OK,TK_NotStart,B3430,MAR for Bridge Deck Water Proofing (iso-cyaniteamin system - 2 mm thick),,950,0,220,0,0,0,220,0,0,0,,,,2013-09-17 07:00,2013-10-16 17:00,,2013-05-05 07:00,2013-06-03 17:00,2013-05-05 07:00,2013-06-03 17:00,2013-05-05 07:00,2013-06-03 17:00,,2013-09-17 07:00,2013-10-16 17:00,,PT_Normal,,,,,SnyNJI6Hh0yg+LHu2WrxQQ,iZSPKO6fEU2OY5GX/C2FnQ,,,N,0,0,,,2013-06-23 13:00,2013-06-23 13:00,admin,admin
485,85570,1346,11528,1474,1,0,N,N,N,CP_Phys,TT_Task,DT_FixedDrtn,RV_OK,TK_NotStart,B3440,Procurment  for Bridge Deck Water Proofing (iso-cyaniteamin system - 2 mm thick),,1362,0,80,0,0,0,80,0,0,0,,,,2013-10-18 09:00,2013-10-26 09:00,,2013-06-04 07:00,2013-06-11 17:00,2013-06-04 07:00,2013-06-11 17:00,2013-06-04 07:00,2013-06-11 17:00,,2013-10-18 09:00,2013-10-26 09:00,,PT_Normal,,,,,u/RcHYk/I0+prKJ1wH/3mw,RMMALKeHM0KtL3zIKalmvw,,,N,0,0,,,2013-06-23 13:00,2013-06-23 13:00,admin,admin
486,85571,1346,11528,1473,1,0,N,N,N,CP_Phys,TT_Task,DT_FixedDrtn,RV_OK,TK_NotStart,B3450,MIR for Polyurethane base paint,,1241,1129,20,0,0,0,20,0,0,0,,,,2013-12-03 08:00,2013-12-07 08:00,,2013-06-08 07:00,2013-06-09 17:00,2013-06-08 07:00,2013-06-09 17:00,2013-06-08 07:00,2013-06-09 17:00,,2013-12-03 08:00,2013-12-07 08:00,,PT_Normal,,,,,4A4cxxxlKUeQu42w6zovIg,TTGP1Ah44k6e9oYivt7D4A,,,N,0,0,,,2013-06-23 13:00,2013-06-23 13:00,admin,admin
487,85572,1346,11528,1473,1,0,N,N,N,CP_Phys,TT_Task,DT_FixedDrtn,RV_OK,TK_NotStart,B3460,MAR for Polyurethane base paint,,1230,0,220,0,0,0,220,0,0,0,,,,2013-10-27 07:00,2013-11-27 17:00,,2013-05-05 07:00,2013-06-03 17:00,2013-05-05 07:00,2013-06-03 17:00,2013-05-05 07:00,2013-06-03 17:00,,2013-10-27 07:00,2013-11-27 17:00,,PT_Normal,,,,,oZ7oqtsqk0+EZP1dsEa/qQ,iZSPKO6fEU2OY5GX/C2FnQ,,,N,0,0,,,2013-06-23 13:00,2013-06-23 13:00,admin,admin
488,85573,1346,11528,1474,1,0,N,N,N,CP_Phys,TT_Task,DT_FixedDrtn,RV_OK,TK_NotStart,B3470,Procurment  for Polyurethane base paint,,1781,0,40,0,0,0,40,0,0,0,,,,2013-11-29 08:00,2013-12-03 08:00,,2013-06-04 07:00,2013-06-07 17:00,2013-06-04 07:00,2013-06-07 17:00,2013-06-04 07:00,2013-06-07 17:00,,2013-11-29 08:00,2013-12-03 08:00,,PT_Normal,,,,,ZOA35EG67UyYi+IrII4XSg,RMMALKeHM0KtL3zIKalmvw,,,N,0,0,,,2013-06-23 13:00,2013-06-23 13:00,admin,admin
489,85574,1346,11528,1473,1,0,N,N,N,CP_Phys,TT_Task,DT_FixedDrtn,RV_OK,TK_NotStart,A12280,Formwork for Stage - 1 at Span - 2,2971,112,0,30,0,183.333334,183.333334,30,16.666667,0,16.666667,,,,2013-08-20 11:00,2013-08-25 11:00,,2013-08-03 09:00,2013-08-06 09:00,2013-08-03 09:00,2013-08-06 09:00,2013-08-03 09:00,2013-08-06 09:00,,2013-08-20 11:00,2013-08-25 11:00,,PT_Normal,,,,,N4y02h/ZYUKfsbSVnA0S8w,l2EIACs+TMCwH/jA9M9jLg,,,N,0,0,,,2013-06-23 13:00,2013-06-23 13:00,admin,admin
490,85575,1346,11528,1473,1,0,N,N,N,CP_Phys,TT_Task,DT_FixedDrtn,RV_OK,TK_NotStart,A12290,"Reinforcement Cutting & Bending for Stage - 1 & 2  (Span-1, 2 & 3)",2970,629,0,60,0,2370.90909,2370.90909,60,380.60606,0,380.60606,,,,2013-08-20 11:00,2013-08-28 11:00,,2013-05-21 12:00,2013-05-29 12:00,2013-05-21 12:00,2013-05-29 12:00,2013-05-21 12:00,2013-05-29 12:00,,2013-08-20 11:00,2013-08-28 11:00,,PT_Normal,,,,,SYysdME8yEiMPXO6EqkOdA,KWCe9LkMRj+j7j0syI10FA,,,N,0,0,,,2013-06-23 13:00,2013-06-23 13:00,admin,admin
491,85576,1346,11528,1473,1,0,N,N,N,CP_Phys,TT_Task,DT_FixedDrtn,RV_OK,TK_NotStart,A12300,Concreting for Stage - 1,2971,112,0,9,0,128,128,9,96,0,96,,,,2013-09-02 08:00,2013-09-02 17:00,,2013-08-17 16:00,2013-08-18 15:00,2013-08-17 16:00,2013-08-18 15:00,2013-08-17 16:00,2013-08-18 15:00,,2013-09-02 08:00,2013-09-02 17:00,,PT_Normal,,,,,xlRRXO+9j0ynb4YcwWPBfQ,9Q7ASCwQQHOZPbIQrdXhpg,,,N,0,0,,,2013-06-23 13:00,2013-06-23 13:00,admin,admin
492,85577,1346,11528,1473,1,0,N,N,N,CP_Phys,TT_Task,DT_FixedDrtn,RV_OK,TK_NotStart,A12310,Inner Formwork for Stage - 2,,112,0,60,0,308.571427,308.571427,60,41.142857,0,41.142857,,,,2013-09-03 07:00,2013-09-10 17:00,,2013-08-18 15:00,2013-08-26 15:00,2013-08-18 15:00,2013-08-26 15:00,2013-08-18 15:00,2013-08-26 15:00,,2013-09-03 07:00,2013-09-10 17:00,,PT_Normal,,,,,9pznCyMyZEGFVZ+4aEyxnw,wTFyBCrESrWB1AT8IOC11A,,,N,0,0,,,2013-06-23 13:00,2013-06-23 13:00,admin,admin
493,85578,1346,11528,1473,1,0,N,N,N,CP_Phys,TT_Task,DT_FixedDrtn,RV_OK,TK_NotStart,A12320,Concreting for Stage - 2,2971,112,0,8,0,120,120,8,96,0,96,,,,2013-09-11 07:00,2013-09-11 15:00,,2013-08-26 15:00,2013-08-27 13:00,2013-08-26 15:00,2013-08-27 13:00,2013-08-26 15:00,2013-08-27 13:00,,2013-09-11 07:00,2013-09-11 15:00,,PT_Normal,,,,,AoeVpMRld02KY3lqApjWdg,D3DgFsueR/mXZKmhZuXFMw,,,N,0,0,,,2013-06-23 13:00,2013-06-23 13:00,admin,admin
494,85579,1346,11528,1473,1,0,N,N,N,CP_Phys,TT_Task,DT_FixedDrtn,RV_OK,TK_NotStart,A12330,Removal of Internal Side Shutters,,112,0,40,0,421.052632,421.052632,40,42.105263,0,42.105263,,,,2013-09-14 13:00,2013-09-18 13:00,,2013-08-28 11:00,2013-09-03 11:00,2013-08-28 11:00,2013-09-03 11:00,2013-08-28 11:00,2013-09-03 11:00,,2013-09-14 13:00,2013-09-18 13:00,,PT_Normal,,,,,nwpK2u7KN0K6mjyip3f8oQ,EccH8SSLQYi3xQeyq5vAsw,,,N,0,0,,,2013-06-23 13:00,2013-06-23 13:00,admin,admin
495,85580,1346,11528,1473,1,0,N,N,N,CP_Phys,TT_Task,DT_FixedDrtn,RV_OK,TK_NotStart,A12340,Post Tensioning Operation,,112,0,27,0,0,0,27,0,0,0,,,,2013-10-30 09:00,2013-11-03 16:00,,2013-10-15 07:00,2013-10-19 14:00,2013-10-15 07:00,2013-10-19 14:00,2013-10-15 07:00,2013-10-19 14:00,,2013-10-30 09:00,2013-11-03 16:00,,PT_Normal,,,,,AtwfaonJl0W9bh+ZNB42xg,bX9/GXMXQU+otevZRT0iWQ,,,N,0,0,,,2013-06-23 13:00,2013-06-23 13:00,admin,admin
496,85581,1346,11528,1473,1,0,N,N,N,CP_Phys,TT_Task,DT_FixedDrtn,RV_OK,TK_NotStart,A12350,Erection of Scaffolding for Span - 3,,152,0,30,0,1020,1020,30,60,0,60,,,,2013-07-31 11:00,2013-08-05 11:00,,2013-07-10 09:00,2013-07-15 09:00,2013-07-10 09:00,2013-07-15 09:00,2013-07-10 09:00,2013-07-15 09:00,,2013-07-31 11:00,2013-08-05 11:00,,PT_Normal,,,,,yuo2yZ1/y0ml8ddpraRqxg,U5srZiagQhaOob6EPDql/A,,,N,0,0,,,2013-06-23 13:00,2013-06-23 13:00,admin,admin
497,85582,1346,11528,1473,1,0,N,N,N,CP_Phys,TT_Task,DT_FixedDrtn,RV_OK,TK_NotStart,A12360,Approval for Scaffolding Design and Drawing,,544,392,140,0,0,0,140,0,0,0,,,,2013-07-13 11:00,2013-07-31 11:00,,2013-04-28 07:00,2013-05-15 17:00,2013-04-28 07:00,2013-05-15 17:00,2013-04-28 07:00,2013-05-15 17:00,,2013-07-13 11:00,2013-07-31 11:00,,PT_Normal,,,,,yvPYIrVcLEq64HxtZdAo3g,DyeYzZSJRCWVv7a9WBWGXg,,,N,0,0,,,2013-06-23 13:00,2013-06-23 13:00,admin,admin
498,85583,1346,11528,1473,1,0,N,N,N,CP_Phys,TT_Task,DT_FixedDrtn,RV_OK,TK_NotStart,A12370,Preparation & Submission of Scaffolding Design and Drawing for Approval,,544,0,30,0,0,0,30,0,0,0,,,,2013-07-08 11:00,2013-07-13 11:00,,2013-04-23 07:00,2013-04-27 17:00,2013-04-23 07:00,2013-04-27 17:00,2013-04-23 07:00,2013-04-27 17:00,,2013-07-08 11:00,2013-07-13 11:00,,PT_Normal,,,,,zc8Ld4WL2UeOCUtT+pCtIQ,+MM/b/3jRYWQznkdjxFGdA,,,N,0,0,,,2013-06-23 13:00,2013-06-23 13:00,admin,admin
499,85584,1346,11528,1473,1,0,N,N,N,CP_Phys,TT_Task,DT_FixedDrtn,RV_OK,TK_NotStart,A12380,Preparation & Submission of Shop Drawing for Box Girder,,373,0,30,0,0,0,30,0,0,0,,,,2013-06-15 10:00,2013-06-18 10:00,,2013-04-23 07:00,2013-04-27 17:00,2013-04-23 07:00,2013-04-27 17:00,2013-04-23 07:00,2013-04-27 17:00,,2013-06-15 10:00,2013-06-18 10:00,,PT_Normal,,,,,5BK3niPSP0uyqN1DxKTF9g,+pS+6pXBTBik8pHDISpB+g,,,N,0,0,,,2013-06-23 13:00,2013-06-23 13:00,admin,admin
500,85585,1346,11528,1473,1,0,N,N,N,CP_Phys,TT_Task,DT_FixedDrtn,RV_OK,TK_NotStart,A12390,Approval of Shop Drawing for Box Girder,,611,437,135,0,0,0,135,0,0,0,,,,2013-07-22 08:00,2013-08-12 13:00,,2013-04-28 07:00,2013-05-15 12:00,2013-04-28 07:00,2013-05-15 12:00,2013-04-28 07:00,2013-05-15 12:00,,2013-07-22 08:00,2013-08-12 13:00,,PT_Normal,,,,,SbcXXFAim0asle/4z1zjPw,D2dAzAj1TVWLE5PFiPkRTg,,,N,0,0,,,2013-06-23 13:00,2013-06-23 13:00,admin,admin
501,85586,1346,11528,1473,1,0,N,N,N,CP_Phys,TT_Task,DT_FixedDrtn,RV_OK,TK_NotStart,A12400,Erection of Scaffolding for Span - 1,2969,132,0,30,0,510,510,30,30,0,30,,,,2013-08-06 11:00,2013-08-13 11:00,,2013-07-20 09:00,2013-07-23 09:00,2013-07-20 09:00,2013-07-23 09:00,2013-07-20 09:00,2013-07-23 09:00,,2013-08-06 11:00,2013-08-13 11:00,,PT_Normal,,,,,3gK2fiBtvEKzUvcmH0I+Bw,VhVOalG0RL2PG9kTQ9vBrg,,,N,0,0,,,2013-06-23 13:00,2013-06-23 13:00,admin,admin
502,85587,1346,11528,1473,1,0,N,N,N,CP_Phys,TT_Task,DT_FixedDrtn,RV_OK,TK_NotStart,A12410,Erection of Scaffolding for Span - 2,2969,112,0,30,0,306,306,30,18,0,18,,,,2013-08-14 11:00,2013-08-19 11:00,,2013-07-28 09:00,2013-07-31 09:00,2013-07-28 09:00,2013-07-31 09:00,2013-07-28 09:00,2013-07-31 09:00,,2013-08-14 11:00,2013-08-19 11:00,,PT_Normal,,,,,8jf4swllAkKlzfD981tmxA,M+pXcZeYS9WJgx+3gDy+AA,,,N,0,0,,,2013-06-23 13:00,2013-06-23 13:00,admin,admin
503,85588,1346,11528,1473,1,0,N,N,N,CP_Phys,TT_Task,DT_FixedDrtn,RV_OK,TK_NotStart,A12420,Reinforcement Fixing for Stage - 1 & 2 at Span - 2,2984,112,0,30,0,342.857143,342.857143,30,34.285714,0,34.285714,,,,2013-08-25 11:00,2013-08-28 11:00,,2013-08-06 09:00,2013-08-13 09:00,2013-08-06 09:00,2013-08-13 09:00,2013-08-06 09:00,2013-08-13 09:00,,2013-08-25 11:00,2013-08-28 11:00,,PT_Normal,,,,,Oh7TnU0qPE2Idn2x2bIjag,f/kw1OcwTIi1l4aKmHusQw,,,N,0,0,,,2013-06-23 13:00,2013-06-23 13:00,admin,admin
504,85589,1346,11528,1473,1,0,N,N,N,CP_Phys,TT_Task,DT_FixedDrtn,RV_OK,TK_NotStart,A12430,Reinforcement Cutting & Bending for Stage - 3,2970,841,0,60,0,436.363636,436.363636,60,60.60606,0,60.60606,,,,2013-09-23 13:00,2013-10-01 13:00,,2013-05-26 12:00,2013-06-03 12:00,2013-05-26 12:00,2013-06-03 12:00,2013-05-26 12:00,2013-06-03 12:00,,2013-09-23 13:00,2013-10-01 13:00,,PT_Normal,,,,,PernawStkkuyb9noeCW1VA,4Bx0JO56QXa4mo0KxagsIQ,,,N,0,0,,,2013-06-23 13:00,2013-06-23 13:00,admin,admin
505,85590,1346,11528,1473,1,0,N,N,N,CP_Phys,TT_Task,DT_FixedDrtn,RV_OK,TK_NotStart,A12440,Reinforcement Fixing for Stage - 3,2984,112,0,40,0,760,760,40,40,0,40,,,,2013-09-28 13:00,2013-10-02 13:00,,2013-09-11 11:00,2013-09-17 11:00,2013-09-11 11:00,2013-09-17 11:00,2013-09-11 11:00,2013-09-17 11:00,,2013-09-28 13:00,2013-10-02 13:00,,PT_Normal,,,,,xVNwbqVYlU+GzLm7lOvQeQ,b/u7dLPZTP+h0b0CGpa6WA,,,N,0,0,,,2013-06-23 13:00,2013-06-23 13:00,admin,admin
506,85591,1346,11528,1473,1,0,N,N,N,CP_Phys,TT_Task,DT_FixedDrtn,RV_OK,TK_NotStart,A12450,Inner Formwork for Stage - 3,2971,112,0,60,0,840,840,60,60,0,60,,,,2013-09-18 13:00,2013-09-28 13:00,,2013-09-03 11:00,2013-09-11 11:00,2013-09-03 11:00,2013-09-11 11:00,2013-09-03 11:00,2013-09-11 11:00,,2013-09-18 13:00,2013-09-28 13:00,,PT_Normal,,,,,EXvobSwDPUSjQOk60y5kIQ,kN2lFbzFSEmboVvzexjr/Q,,,N,0,0,,,2013-06-23 13:00,2013-06-23 13:00,admin,admin
507,85592,1346,11528,1473,1,0,N,N,N,CP_Phys,TT_Task,DT_FixedDrtn,RV_OK,TK_NotStart,A12460,Concreting for Stage - 3,2969,112,0,9,0,135,135,9,108,0,108,,,,2013-10-07 10:00,2013-10-08 09:00,,2013-09-22 08:00,2013-09-22 17:00,2013-09-22 08:00,2013-09-22 17:00,2013-09-22 08:00,2013-09-22 17:00,,2013-10-07 10:00,2013-10-08 09:00,,PT_Normal,,,,,pyc1yUStnU6uAzQzbNYFtQ,ypM6S0ART7W169zKbp1g3Q,,,N,0,0,,,2013-06-23 13:00,2013-06-23 13:00,admin,admin
508,85593,1346,11528,1473,1,0,N,N,N,CP_Phys,TT_Task,DT_FixedDrtn,RV_OK,TK_NotStart,A12470,Grouting for Post Tensioned Ducts,,112,0,27,0,0,0,27,0,0,0,,,,2013-11-03 16:00,2013-11-06 13:00,,2013-10-19 14:00,2013-10-22 11:00,2013-10-19 14:00,2013-10-22 11:00,2013-10-19 14:00,2013-10-22 11:00,,2013-11-03 16:00,2013-11-06 13:00,,PT_Normal,,,,,ktAJX6n0AUOhw5qwPDUlLw,i6u/muwQTWOlDhCCCYGoHg,,,N,0,0,,,2013-06-23 13:00,2013-06-23 13:00,admin,admin
509,85594,1346,11528,1473,1,0,N,N,N,CP_Phys,TT_Task,DT_FixedDrtn,RV_OK,TK_NotStart,A12480,Preparation & Submission of Bar Schedule Drawing,,629,0,40,0,0,0,40,0,0,0,,,,2013-07-23 16:00,2013-07-29 16:00,,2013-04-28 07:00,2013-05-01 17:00,2013-04-28 07:00,2013-05-01 17:00,2013-04-28 07:00,2013-05-01 17:00,,2013-07-23 16:00,2013-07-29 16:00,,PT_Normal,,,,,gxj8ob6E90u8pwDvmAyUbw,e4DENybdR3iqi/9wVTKa7A,,,N,0,0,,,2013-06-23 13:00,2013-06-23 13:00,admin,admin
510,85595,1346,11528,1473,1,0,N,N,N,CP_Phys,TT_Task,DT_FixedDrtn,RV_OK,TK_NotStart,A12490,Approval of Bar Schedule Drawing,,629,0,135,0,0,0,135,0,0,0,,,,2013-07-29 16:00,2013-08-20 11:00,,2013-05-04 07:00,2013-05-21 12:00,2013-05-04 07:00,2013-05-21 12:00,2013-05-04 07:00,2013-05-21 12:00,,2013-07-29 16:00,2013-08-20 11:00,,PT_Normal,,,,,tKDxq7dZEUeuFFFgcljutw,vULaqiqmQxqrwsDh4EO2NQ,,,N,0,0,,,2013-06-23 13:00,2013-06-23 13:00,admin,admin
511,85596,1346,11528,1473,1,0,N,N,N,CP_Phys,TT_Task,DT_FixedDrtn,RV_OK,TK_NotStart,A12500,Backfilling & Ground Preprationfor Abutment & Piers at Span - 3,2984,152,0,27,0,135,135,27,135,0,135,,,,2013-07-28 14:00,2013-07-31 11:00,,2013-07-07 12:00,2013-07-10 09:00,2013-07-07 12:00,2013-07-10 09:00,2013-07-07 12:00,2013-07-10 09:00,,2013-07-28 14:00,2013-07-31 11:00,,PT_Normal,,,,,btvsIh2YwE+HMOwi6N8s1Q,w+xel02cSX63bI3GCMo5fA,,,N,0,0,,,2013-06-23 13:00,2013-06-23 13:00,admin,admin
512,85597,1346,11528,1473,1,0,N,N,N,CP_Phys,TT_Task,DT_FixedDrtn,RV_OK,TK_NotStart,A12510,"Bearings Installation for Pier - 2 A,B & Abutment - 2",3001,174,0,18,0,54,54,18,18,0,18,,,,2013-08-12 13:00,2013-08-14 11:00,,2013-07-16 09:00,2013-07-17 17:00,2013-07-16 09:00,2013-07-17 17:00,2013-07-16 09:00,2013-07-17 17:00,,2013-08-12 13:00,2013-08-14 11:00,,PT_Normal,,,,,IC4e0/62SkS+GgpfkTCHPg,85lbeXZWRW66pNTHI7Nd/Q,,,N,0,0,,,2013-06-23 13:00,2013-06-23 13:00,admin,admin
513,85598,1346,11528,1473,1,0,N,N,N,CP_Phys,TT_Task,DT_FixedDrtn,RV_OK,TK_NotStart,A12520,Formwork for Stage - 1 at Span - 3,2971,174,0,30,0,660,660,30,60,0,60,,,,2013-08-17 11:00,2013-08-20 11:00,,2013-07-21 07:00,2013-07-23 17:00,2013-07-21 07:00,2013-07-23 17:00,2013-07-21 07:00,2013-07-23 17:00,,2013-08-17 11:00,2013-08-20 11:00,,PT_Normal,,,,,kmVc8GbZu0ydFREVHUAZiA,HcyrceY6RWOTIavWOItCTA,,,N,0,0,,,2013-06-23 13:00,2013-06-23 13:00,admin,admin
514,85599,1346,11528,1473,1,0,N,N,N,CP_Phys,TT_Task,DT_FixedDrtn,RV_OK,TK_NotStart,A12530,"Bearings Installation for Pier - 1 A,B & Abutment - 1",3001,144,0,18,0,54,54,18,18,0,18,,,,2013-08-17 13:00,2013-08-19 11:00,,2013-07-24 09:00,2013-07-27 17:00,2013-07-24 09:00,2013-07-27 17:00,2013-07-24 09:00,2013-07-27 17:00,,2013-08-17 13:00,2013-08-19 11:00,,PT_Normal,,,,,F/ptDJfV50W/O8b0z5GT4g,XX4uZuGuRIaD9VaL3NPB/w,,,N,0,0,,,2013-06-23 13:00,2013-06-23 13:00,admin,admin
515,85600,1346,11528,1473,1,0,N,N,N,CP_Phys,TT_Task,DT_FixedDrtn,RV_OK,TK_NotStart,A12540,Formwork for Stage - 1 at Span - 1,2971,144,0,30,0,330,330,30,30,0,30,,,,2013-08-20 11:00,2013-08-25 11:00,,2013-07-29 07:00,2013-07-31 17:00,2013-07-29 07:00,2013-07-31 17:00,2013-07-29 07:00,2013-07-31 17:00,,2013-08-20 11:00,2013-08-25 11:00,,PT_Normal,,,,,hnTJWHv8LU+h7uSehEQLGQ,t13fsFFVQTKTj9DTQIUMKg,,,N,0,0,,,2013-06-23 13:00,2013-06-23 13:00,admin,admin
516,85601,1346,11528,1473,1,0,N,N,N,CP_Phys,TT_Task,DT_FixedDrtn,RV_OK,TK_NotStart,A12550,Reinforcement Fixing for Stage - 1 & 2 at Span - 1,2984,144,32,30,0,480,480,30,48,0,48,,,,2013-08-25 11:00,2013-08-28 11:00,,2013-08-03 07:00,2013-08-05 17:00,2013-08-03 07:00,2013-08-05 17:00,2013-08-03 07:00,2013-08-05 17:00,,2013-08-25 11:00,2013-08-28 11:00,,PT_Normal,,,,,kwFsFkezDEi722mkp431Kg,X+uBfAOMQVq4ZKTZUNqizw,,,N,0,0,,,2013-06-23 13:00,2013-06-23 13:00,admin,admin
517,85602,1346,11528,1473,1,0,N,N,N,CP_Phys,TT_Task,DT_FixedDrtn,RV_OK,TK_NotStart,A12560,Reinforcement Fixing for Stage - 1 & 2 at Span - 3,2984,174,60,60,0,1920,1920,60,192,0,192,,,,2013-08-20 11:00,2013-08-28 11:00,,2013-07-24 07:00,2013-07-31 17:00,2013-07-24 07:00,2013-07-31 17:00,2013-07-24 07:00,2013-07-31 17:00,,2013-08-20 11:00,2013-08-28 11:00,,PT_Normal,,,,,TYm93w7LgEmlGFrMWBvPzA,zkJcEGSSQLGIe1GuF4f2Aw,,,N,0,0,,,2013-06-23 13:00,2013-06-23 13:00,admin,admin
518,85603,1346,11528,1473,1,0,N,N,N,CP_Phys,TT_Task,DT_FixedDrtn,RV_OK,TK_NotStart,A12570,Provision of Prestressing Ducts,2984,112,0,27,0,162,162,27,27,0,27,,,,2013-08-28 11:00,2013-09-02 08:00,,2013-08-13 09:00,2013-08-17 16:00,2013-08-13 09:00,2013-08-17 16:00,2013-08-13 09:00,2013-08-17 16:00,,2013-08-28 11:00,2013-09-02 08:00,,PT_Normal,,,,,c6y1xBfEtEaypVKPofvEtA,Ix3DWIfnRUedwWjQyWqX1A,,,N,0,0,,,2013-06-23 13:00,2013-06-23 13:00,admin,admin
519,85604,1346,11528,1473,1,0,N,N,N,CP_Phys,TT_Task,DT_FixedDrtn,RV_OK,TK_NotStart,A12580,Side/Edge Shutters for Deck Slab,2980,112,0,27,0,396,396,27,36,0,36,,,,2013-10-02 13:00,2013-10-07 10:00,,2013-09-17 11:00,2013-09-22 08:00,2013-09-17 11:00,2013-09-22 08:00,2013-09-17 11:00,2013-09-22 08:00,,2013-10-02 13:00,2013-10-07 10:00,,PT_Normal,,,,,6HZGogjXw0G0CNO1WtiTyg,aXgGBBkERyyO1kKuDwrMgw,,,N,0,0,,,2013-06-23 13:00,2013-06-23 13:00,admin,admin
520,85605,1346,11528,1474,1,0,N,N,N,CP_Phys,TT_Task,DT_FixedDrtn,RV_OK,TK_NotStart,A12590,Curing for Deck Slab,,152,0,140,0,0,0,140,0,0,0,,,,2013-10-08 09:00,2013-10-22 09:00,,2013-09-23 07:00,2013-10-06 17:00,2013-09-23 07:00,2013-10-06 17:00,2013-09-23 07:00,2013-10-06 17:00,,2013-10-08 09:00,2013-10-22 09:00,,PT_Normal,,,,,lQiGoH9LkUCPvJX7pdmguw,fAQydH80S7q4Xi0p+eVRdw,,,N,0,0,,,2013-06-23 13:00,2013-06-23 13:00,admin,admin
521,85606,1346,11528,1473,1,0,N,N,N,CP_Phys,TT_Task,DT_FixedDrtn,RV_OK,TK_NotStart,A12600,Removal of Inner Formwork For Stage - 3,2969,112,0,30,0,160,160,30,20,0,20,,,,2013-10-22 09:00,2013-10-27 09:00,,2013-10-07 07:00,2013-10-09 17:00,2013-10-07 07:00,2013-10-09 17:00,2013-10-07 07:00,2013-10-09 17:00,,2013-10-22 09:00,2013-10-27 09:00,,PT_Normal,,,,,BQhCZRoDzE2bv9y8bwKvqw,AQDth5OiRQiIIu4zyzdSGQ,,,N,0,0,,,2013-06-23 13:00,2013-06-23 13:00,admin,admin
522,85607,1346,11528,1473,1,0,N,N,N,CP_Phys,TT_Task,DT_FixedDrtn,RV_OK,TK_NotStart,A12610,Removal of Side/Edge Shutters for Deck Slab,2969,152,40,60,0,168,168,60,24,0,24,,,,2013-10-14 09:00,2013-10-22 09:00,,2013-09-23 07:00,2013-09-30 17:00,2013-09-23 07:00,2013-09-30 17:00,2013-09-23 07:00,2013-09-30 17:00,,2013-10-14 09:00,2013-10-22 09:00,,PT_Normal,,,,,F+EIMmUml0mW1cjchw5h+A,Eb+FXnQrRtGUkVtx6XlaVQ,,,N,0,0,,,2013-06-23 13:00,2013-06-23 13:00,admin,admin
523,85608,1346,11528,1473,1,0,N,N,N,CP_Phys,TT_Task,DT_FixedDrtn,RV_OK,TK_NotStart,A12620,Reinforcement Fixing for Crash Barriers,2971,112,0,60,0,780,780,60,300,0,300,,,,2013-10-22 09:00,2013-10-30 09:00,,2013-10-07 07:00,2013-10-14 17:00,2013-10-07 07:00,2013-10-14 17:00,2013-10-07 07:00,2013-10-14 17:00,,2013-10-22 09:00,2013-10-30 09:00,,PT_Normal,,,,,Q1DU/7xoKkichIixG/9ogQ,8MbzR19uTtmuNCq9YGngWg,,,N,0,0,,,2013-06-23 13:00,2013-06-23 13:00,admin,admin
524,85609,1346,11528,1473,1,0,N,N,N,CP_Phys,TT_Task,DT_FixedDrtn,RV_OK,TK_NotStart,A12630,Dismantling of Complete Scaffolding,2980,112,0,30,0,330,330,30,30,0,30,,,,2013-12-08 08:00,2013-12-11 08:00,,2013-11-18 16:00,2013-11-25 16:00,2013-11-18 16:00,2013-11-25 16:00,2013-11-18 16:00,2013-11-25 16:00,,2013-12-08 08:00,2013-12-11 08:00,,PT_Normal,,,,,9fou1ViSx0mdbcNqSf8MnQ,8aivxtRtQoCf3HDtR5D2DQ,,,N,0,0,,,2013-06-23 13:00,2013-06-23 13:00,admin,admin
525,85610,1346,11528,1473,1,0,N,N,N,CP_Phys,TT_Task,DT_FixedDrtn,RV_OK,TK_NotStart,A12640,Precast Concrete Curbs for Side Walk,2981,187,75,60,0,270,270,60,0,0,0,,,,2013-11-18 08:00,2013-11-30 08:00,,2013-10-22 11:00,2013-10-30 11:00,2013-10-22 11:00,2013-10-30 11:00,2013-10-22 11:00,2013-10-30 11:00,,2013-11-18 08:00,2013-11-30 08:00,,PT_Normal,,,,,xNmcihbW4ES9i4a/UE/SiQ,VrLeoUtAR4yGOsmFPHhA9g,,,N,0,0,,,2013-06-23 13:00,2013-06-23 13:00,admin,admin
526,85611,1346,11528,1473,1,0,N,N,N,CP_Phys,TT_Task,DT_FixedDrtn,RV_OK,TK_NotStart,A12650,Precast Concrete Tile Paving for Side Walk,2981,112,0,60,0,270,270,60,0,0,0,,,,2013-11-30 08:00,2013-12-08 08:00,,2013-11-10 16:00,2013-11-18 16:00,2013-11-10 16:00,2013-11-18 16:00,2013-11-10 16:00,2013-11-18 16:00,,2013-11-30 08:00,2013-12-08 08:00,,PT_Normal,,,,,q09dipMY/EiFw//XeCu7/g,R+CfHx6KToi52+W6VTdtIw,,,N,0,0,,,2013-06-23 13:00,2013-06-23 13:00,admin,admin
527,85612,1346,11528,1473,1,0,N,N,N,CP_Phys,TT_Task,DT_FixedDrtn,RV_OK,TK_NotStart,A12660,Painting Works for Bridge,2981,112,0,30,0,252,252,30,0,0,0,,,,2013-12-03 08:00,2013-12-08 08:00,,2013-11-13 16:00,2013-11-18 16:00,2013-11-13 16:00,2013-11-18 16:00,2013-11-13 16:00,2013-11-18 16:00,,2013-12-03 08:00,2013-12-08 08:00,,PT_Normal,,,,,JMAxyRuAw0KWU8M6fHYvPg,e4mItfvRShCsMwd1zjiY8w,,,N,0,0,,,2013-06-23 13:00,2013-06-23 13:00,admin,admin
528,85613,1346,11528,1473,1,0,N,N,N,CP_Phys,TT_Task,DT_FixedDrtn,RV_OK,TK_NotStart,A12670,Provision of Access Doors,2969,234,122,100,0,88.888888,88.888888,100,0,0,0,,,,2013-11-24 08:00,2013-12-08 08:00,,2013-10-19 14:00,2013-11-02 14:00,2013-10-19 14:00,2013-11-02 14:00,2013-10-19 14:00,2013-11-02 14:00,,2013-11-24 08:00,2013-12-08 08:00,,PT_Normal,,,,,3gy1ZDaYf0297wdzrywc6A,dF9HjMi/RLmGHkLc+dDt6A,,,N,0,0,,,2013-06-23 13:00,2013-06-23 13:00,admin,admin
529,85614,1346,11528,1473,1,0,N,N,N,CP_Phys,TT_Task,DT_FixedDrtn,RV_OK,TK_NotStart,A12680,Removal of Out Side Shutters,2969,112,0,30,0,192,192,30,24,0,24,,,,2013-10-27 09:00,2013-10-30 09:00,,2013-10-12 07:00,2013-10-14 17:00,2013-10-12 07:00,2013-10-14 17:00,2013-10-12 07:00,2013-10-14 17:00,,2013-10-27 09:00,2013-10-30 09:00,,PT_Normal,,,,,hqY75UUz+UycbIZBcK1SRA,4hle+zq3TeCuzvUcfR7Wxw,,,N,0,0,,,2013-06-23 13:00,2013-06-23 13:00,admin,admin
530,85615,1346,11528,1473,1,0,N,N,N,CP_Phys,TT_Task,DT_FixedDrtn,RV_OK,TK_NotStart,A12690,Provision of Ducts Within Bridge Box,2984,112,0,30,0,31.999999,31.999999,30,5.333333,0,5.333333,,,,2013-10-27 09:00,2013-10-30 09:00,,2013-10-12 07:00,2013-10-14 17:00,2013-10-12 07:00,2013-10-14 17:00,2013-10-12 07:00,2013-10-14 17:00,,2013-10-27 09:00,2013-10-30 09:00,,PT_Normal,,,,,3n+5dMn5zkWmc/h7n795vg,we57z6sCSW+RhqZ3An9gcQ,,,N,0,0,,,2013-06-23 13:00,2013-06-23 13:00,admin,admin
531,85616,1346,11528,1473,1,0,N,N,N,CP_Phys,TT_Task,DT_FixedDrtn,RV_OK,TK_NotStart,A12700,Water Proofing Membrane for Deck Slab,2969,132,20,40,0,80,80,40,0,0,0,,,,2013-10-26 09:00,2013-10-30 09:00,,2013-10-07 07:00,2013-10-12 17:00,2013-10-07 07:00,2013-10-12 17:00,2013-10-07 07:00,2013-10-12 17:00,,2013-10-26 09:00,2013-10-30 09:00,,PT_Normal,,,,,Af6YaVvHhkyDzx2mVxaOfA,F+xXL10vRVuKLE7Ac/4coQ,,,N,0,0,,,2013-06-23 13:00,2013-06-23 13:00,admin,admin
532,85617,1346,11528,1473,1,0,N,N,N,CP_Phys,TT_Task,DT_FixedDrtn,RV_OK,TK_NotStart,A12710,Completion of Box Girder Bridge - West Bound,,112,0,8,0,0,0,8,0,0,0,,,,2013-12-10 10:00,2013-12-11 08:00,,2013-11-25 08:00,2013-11-25 16:00,2013-11-25 08:00,2013-11-25 16:00,2013-11-25 08:00,2013-11-25 16:00,,2013-12-10 10:00,2013-12-11 08:00,,PT_Normal,,,,,ZMpIy1k60UGbUhN+AwkSuA,2+YYDbmBQGWETjWzcN/1sg,,,N,0,0,,,2013-06-23 13:00,2013-06-23 13:00,admin,admin
533,85618,1346,11528,1473,1,0,N,N,N,CP_Phys,TT_Task,DT_FixedDrtn,RV_OK,TK_NotStart,A12720,Backfilling & Ground Prepration for Abutment & Piers at Span - 1,,112,0,27,0,0,0,27,0,0,0,,,,2013-07-30 14:00,2013-08-04 11:00,,2013-07-15 12:00,2013-07-20 09:00,2013-07-15 12:00,2013-07-20 09:00,2013-07-15 12:00,2013-07-20 09:00,,2013-07-30 14:00,2013-08-04 11:00,,PT_Normal,,,,,b1smbXq+VUK8TlSacKlC1A,erMFv4X4SKGuSr/oc3TKPQ,,,N,0,0,,,2013-06-23 13:00,2013-06-23 13:00,admin,admin
534,85619,1346,11528,1473,1,0,N,N,N,CP_Phys,TT_Task,DT_FixedDrtn,RV_OK,TK_NotStart,A12730,Backfilling & Ground Prepration for Piers at Span - 2,,112,0,60,0,0,0,60,0,0,0,,,,2013-08-04 11:00,2013-08-14 11:00,,2013-07-20 09:00,2013-07-28 09:00,2013-07-20 09:00,2013-07-28 09:00,2013-07-20 09:00,2013-07-28 09:00,,2013-08-04 11:00,2013-08-14 11:00,,PT_Normal,,,,,b3U/wg3CbkCciPFzwKnP/g,306iSnd6TMeKH2BV8DolUA,,,N,0,0,,,2013-06-23 13:00,2013-06-23 13:00,admin,admin
535,85620,1346,11528,1473,1,0,N,N,N,CP_Phys,TT_Task,DT_FixedDrtn,RV_OK,TK_NotStart,A12740,Concreting for Crash Barriers by Using Prefabricated Molds,,112,0,135,0,0,0,135,0,0,0,,,,2013-11-06 13:00,2013-11-30 08:00,,2013-10-22 11:00,2013-11-10 16:00,2013-10-22 11:00,2013-11-10 16:00,2013-10-22 11:00,2013-11-10 16:00,,2013-11-06 13:00,2013-11-30 08:00,,PT_Normal,,,,,qh4y2aZ8t0uGnuXCCSx6Qw,1eP312RZREKwqM80//Tcfw,,,N,0,0,,,2013-06-23 13:00,2013-06-23 13:00,admin,admin
536,85621,1346,11528,1473,1,0,N,N,N,CP_Phys,TT_Task,DT_FixedDrtn,RV_OK,TK_NotStart,A12750,Reinforcement Cutting & Bending for Crash Barriers,,937,755,80,0,0,0,80,0,0,0,,,,2013-10-12 09:00,2013-10-22 09:00,,2013-05-29 12:00,2013-06-10 12:00,2013-05-29 12:00,2013-06-10 12:00,2013-05-29 12:00,2013-06-10 12:00,,2013-10-12 09:00,2013-10-22 09:00,,PT_Normal,,,,,2o/jfYNpYE29bmbn4CgYcw,7plZ3hFzR7608yj2kX3aLA,,,N,0,0,,,2013-06-23 13:00,2013-06-23 13:00,admin,admin
537,85622,1346,11528,1473,1,0,N,N,N,CP_Phys,TT_Task,DT_FixedDrtn,RV_OK,TK_NotStart,A15030,"Inspection of Bearings for Pier - 2 A,B & Abutment - 2",3001,174,0,10,0,54,54,10,18,0,18,,,,2013-08-14 11:00,2013-08-17 11:00,,2013-07-20 07:00,2013-07-20 17:00,2013-07-20 07:00,2013-07-20 17:00,2013-07-20 07:00,2013-07-20 17:00,,2013-08-14 11:00,2013-08-17 11:00,,PT_Normal,,,,,MO6cJtCujkif5tPAJ/NaXg,yk87HlLUkkqpBzOYCUjUvA,,,N,0,0,,,2013-06-23 13:00,2013-06-23 13:00,admin,admin
538,85623,1346,11528,1473,1,0,N,N,N,CP_Phys,TT_Task,DT_FixedDrtn,RV_OK,TK_NotStart,A15040,"Inspection of Bearings for for Pier - 1 A,B & Abutment - 1",3001,144,0,10,0,54,54,10,18,0,18,,,,2013-08-19 11:00,2013-08-20 11:00,,2013-07-28 07:00,2013-07-28 17:00,2013-07-28 07:00,2013-07-28 17:00,2013-07-28 07:00,2013-07-28 17:00,,2013-08-19 11:00,2013-08-20 11:00,,PT_Normal,,,,,Iu9OP65rfkiUj6CZdjW8/g,tPlAgAoea0Wrx4ssId32kw,,,N,0,0,,,2013-06-23 13:00,2013-06-23 13:00,admin,admin
539,85624,1346,11528,1473,1,0,N,N,N,CP_Phys,TT_Task,DT_FixedDrtn,RV_OK,TK_NotStart,A15061,Inspection of Scaffolding for Span - 3,,152,0,10,0,1836,1836,10,108,0,108,,,,2013-08-05 11:00,2013-08-06 11:00,,2013-07-15 09:00,2013-07-16 09:00,2013-07-15 09:00,2013-07-16 09:00,2013-07-15 09:00,2013-07-16 09:00,,2013-08-05 11:00,2013-08-06 11:00,,PT_Normal,,,,,u3UCyK7fIEeYiFDFUgX0+Q,EWq4eNAZ6UCXoTlYbpXhAg,,,N,0,0,,,2013-06-23 13:00,2013-06-23 13:00,admin,admin
540,85625,1346,11528,1473,1,0,N,N,N,CP_Phys,TT_Task,DT_FixedDrtn,RV_OK,TK_NotStart,A15062,Inspection of Scaffolding for Span - 1,2969,132,0,10,0,918,918,10,54,0,54,,,,2013-08-13 11:00,2013-08-14 11:00,,2013-07-23 09:00,2013-07-24 09:00,2013-07-23 09:00,2013-07-24 09:00,2013-07-23 09:00,2013-07-24 09:00,,2013-08-13 11:00,2013-08-14 11:00,,PT_Normal,,,,,x/vDFPIsxESibT01vGzjwA,wBNWKg8qpU6Ik3SZnxerUg,,,N,0,0,,,2013-06-23 13:00,2013-06-23 13:00,admin,admin
541,85626,1346,11528,1473,1,0,N,N,N,CP_Phys,TT_Task,DT_FixedDrtn,RV_OK,TK_NotStart,A15063,Inspection of Scaffolding for Span - 2,2969,112,0,10,0,918,918,10,54,0,54,,,,2013-08-19 11:00,2013-08-20 11:00,,2013-07-31 09:00,2013-08-03 09:00,2013-07-31 09:00,2013-08-03 09:00,2013-07-31 09:00,2013-08-03 09:00,,2013-08-19 11:00,2013-08-20 11:00,,PT_Normal,,,,,wDyTn5shaEu9uFCyc1PxHQ,bDZ0M+valUGEAzt+ZMJX/g,,,N,0,0,,,2013-06-23 13:00,2013-06-23 13:00,admin,admin
542,85627,1346,11528,1473,1,0,N,N,N,CP_Phys,TT_Task,DT_FixedDrtn,RV_OK,TK_NotStart,B3191,Prepartion & Submission for Bearing Pads,,1310,0,80,0,0,0,80,0,0,0,,,,2013-10-27 07:00,2013-11-05 17:00,,2013-04-23 07:00,2013-05-04 17:00,2013-04-23 07:00,2013-05-04 17:00,2013-04-23 07:00,2013-05-04 17:00,,2013-10-27 07:00,2013-11-05 17:00,,PT_Normal,,,,,MPZldAnpcUGSLr8oMpePig,JamyOxs5OkabDLRZtTvk1g,,,N,0,0,,,2013-06-23 13:00,2013-06-23 13:00,admin,admin
543,85628,1346,11528,1473,1,100,N,N,N,CP_Phys,TT_Task,DT_FixedDrtn,RV_OK,TK_Complete,B3161,Prepartion & Submission for Rubberized Bitumen emulsion,,,,0,0,0,0,80,0,0,0,,2013-01-16 00:00,2013-01-28 00:00,2013-07-25 14:00,2013-07-25 14:00,,2013-04-23 00:00,2013-04-23 00:00,,,2012-12-29 07:00,2013-01-07 17:00,,,,,PT_Normal,,,,,GcbunQ0P2US1Lp7lUr0J7A,ueIYM1RHE0Ch8IxR+4I/ug,,,N,0,0,,,2013-06-23 13:00,2013-06-23 13:00,admin,admin
544,85629,1346,11528,1473,1,100,N,N,N,CP_Phys,TT_Task,DT_FixedDrtn,RV_OK,TK_Complete,B1491,Prepartion & Submission for Precast Curbs (Mountable and Non Mountable),,,,0,0,0,0,80,0,0,0,,2013-03-18 00:00,2013-03-30 00:00,2013-09-25 08:00,2013-09-25 08:00,,2013-04-23 00:00,2013-04-23 00:00,,,2013-02-18 07:00,2013-02-27 17:00,,,,,PT_Normal,,,,,9lYi2xwikEGrm5TPwBriYw,DoWKf7UF5kmFkrQZXV36ow,,,N,0,0,,,2013-06-23 13:00,2013-06-23 13:00,admin,admin
545,85630,1346,11528,1473,1,100,N,N,N,CP_Phys,TT_Task,DT_FixedDrtn,RV_OK,TK_Complete,B3101,Prepartion & Submission for Bearings,,,,0,0,0,0,80,0,0,0,,2013-03-03 00:00,2013-03-13 00:00,2013-05-22 13:00,2013-05-22 13:00,,2013-04-23 00:00,2013-04-23 00:00,,,2012-12-23 07:00,2013-01-01 17:00,,,,,PT_Normal,,,,,ys4A3yK6p0Ge66B+Bwuf2g,cKe0Lw6WikKRyKTwFxpLwA,,,N,0,0,,,2013-06-23 13:00,2013-06-23 13:00,admin,admin
546,85631,1346,11528,1473,1,100,N,N,N,CP_Phys,TT_Task,DT_FixedDrtn,RV_OK,TK_Complete,B1551,Prepartion & Submission for Precast Concrete Tile (60 mm thick),,,,0,0,0,0,80,0,0,0,,2013-03-09 00:00,2013-03-19 00:00,2013-10-08 07:00,2013-10-08 07:00,,2013-04-23 00:00,2013-04-23 00:00,,,2013-02-18 07:00,2013-02-27 17:00,,,,,PT_Normal,,,,,hz+0UlrS1EWNNNN5DWMiYQ,3lyKtebs6ka15/rbMBqQvQ,,,N,0,0,,,2013-06-23 13:00,2013-06-23 13:00,admin,admin
547,85632,1346,11528,1473,1,0,N,N,N,CP_Phys,TT_Task,DT_FixedDrtn,RV_OK,TK_NotStart,B3132,Prepartion & Submission for Epoxy Grout,,486,0,80,0,0,0,80,0,0,0,,,,2013-06-30 13:00,2013-07-10 13:00,,2013-04-23 07:00,2013-05-04 17:00,2013-04-23 07:00,2013-05-04 17:00,2013-04-23 07:00,2013-05-04 17:00,,2013-06-30 13:00,2013-07-10 13:00,,PT_Normal,,,,,DW1HaGWQ302FmhNpqHxqQA,k+DH7qtBwkCxA+NSn1KNYg,,,N,0,0,,,2013-06-23 13:00,2013-06-23 13:00,admin,admin
548,85633,1346,11528,1473,1,0,N,N,N,CP_Phys,TT_Task,DT_FixedDrtn,RV_OK,TK_NotStart,B3431,Prepartion & Submission for Bridge Deck Water Proofing (iso-cyaniteamin system - 2 mm thick),,950,0,80,0,0,0,80,0,0,0,,,,2013-09-07 07:00,2013-09-16 17:00,,2013-04-23 07:00,2013-05-04 17:00,2013-04-23 07:00,2013-05-04 17:00,2013-04-23 07:00,2013-05-04 17:00,,2013-09-07 07:00,2013-09-16 17:00,,PT_Normal,,,,,4jPO0X/PTUqAD9QmAgepYQ,M7eJgHhMqE++ceCaNzMwbw,,,N,0,0,,,2013-06-23 13:00,2013-06-23 13:00,admin,admin
549,85634,1346,11528,1473,1,0,N,N,N,CP_Phys,TT_Task,DT_FixedDrtn,RV_OK,TK_NotStart,B3461,Prepartion & Submission for Polyurethane base paint,,1230,0,80,0,0,0,80,0,0,0,,,,2013-10-15 07:00,2013-10-26 17:00,,2013-04-23 07:00,2013-05-04 17:00,2013-04-23 07:00,2013-05-04 17:00,2013-04-23 07:00,2013-05-04 17:00,,2013-10-15 07:00,2013-10-26 17:00,,PT_Normal,,,,,3zJDqXthKE+RCQZAbPoeLg,XewieHMilkSPOegutXtxJg,,,N,0,0,,,2013-06-23 13:00,2013-06-23 13:00,admin,admin
550,85635,1346,11534,1473,1,0,N,N,N,CP_Phys,TT_Task,DT_FixedDrtn,RV_OK,TK_NotStart,A13340,Formwork for Stage - 1 at Span - 2,,0,0,30,0,183.333334,183.333334,30,16.666667,0,16.666667,,,,2013-09-25 10:00,2013-09-30 10:00,,2013-09-25 10:00,2013-09-30 10:00,2013-09-25 10:00,2013-09-30 10:00,2013-09-25 10:00,2013-09-30 10:00,,2013-09-25 10:00,2013-09-30 10:00,,PT_Normal,,,,,0kXFCEI8jECKdf8J0dLNow,J/HMkfWlSeqXNBOtSyTekw,,,Y,0,0,,,2013-06-23 13:00,2013-06-23 13:00,admin,admin
551,85636,1346,11534,1473,1,0,N,N,N,CP_Phys,TT_Task,DT_FixedDrtn,RV_OK,TK_NotStart,A13350,"Reinforcement Cutting & Bending for Stage - 1 & 2 (Span-1,2 & 3)",2970,868,0,60,0,1595.454546,1595.454546,60,222.424242,0,222.424242,,,,2013-09-24 10:00,2013-10-02 10:00,,2013-05-22 12:00,2013-06-01 12:00,2013-05-22 12:00,2013-06-01 12:00,2013-05-22 12:00,2013-06-01 12:00,,2013-09-24 10:00,2013-10-02 10:00,,PT_Normal,,,,,jcBW0tkzJEO6N5S18BNedA,Am/ysNhYRziHGgKfA9MyWg,,,N,0,0,,,2013-06-23 13:00,2013-06-23 13:00,admin,admin
552,85637,1346,11534,1473,1,0,N,N,N,CP_Phys,TT_Task,DT_FixedDrtn,RV_OK,TK_NotStart,A13360,Concreting for Stage - 1,2971,0,0,9,0,133,133,9,101,0,101,,,,2013-10-05 10:00,2013-10-06 09:00,,2013-10-05 10:00,2013-10-06 09:00,2013-10-05 10:00,2013-10-06 09:00,2013-10-05 10:00,2013-10-06 09:00,,2013-10-05 10:00,2013-10-06 09:00,,PT_Normal,,,,,zElY10oNOkKFxWOo4/qFjA,d66H3rqPTPixPu1A/wKssA,,,Y,0,0,,,2013-06-23 13:00,2013-06-23 13:00,admin,admin
553,85638,1346,11534,1473,1,0,N,N,N,CP_Phys,TT_Task,DT_FixedDrtn,RV_OK,TK_NotStart,A13370,Inner Formwork for Stage - 2,,0,0,30,0,450,450,30,60,0,60,,,,2013-10-06 09:00,2013-10-09 09:00,,2013-10-06 09:00,2013-10-09 09:00,2013-10-06 09:00,2013-10-09 09:00,2013-10-06 09:00,2013-10-09 09:00,,2013-10-06 09:00,2013-10-09 09:00,,PT_Normal,,,,,RQ8/5uUh7UuxeC7A/Ileag,W5gQSp79QCK5HeePu36DRw,,,Y,0,0,,,2013-06-23 13:00,2013-06-23 13:00,admin,admin
554,85639,1346,11534,1473,1,0,N,N,N,CP_Phys,TT_Task,DT_FixedDrtn,RV_OK,TK_NotStart,A13380,Concreting for Stage - 2,2971,0,0,8,0,120,120,8,96,0,96,,,,2013-10-09 09:00,2013-10-09 17:00,,2013-10-09 09:00,2013-10-09 17:00,2013-10-09 09:00,2013-10-09 17:00,2013-10-09 09:00,2013-10-09 17:00,,2013-10-09 09:00,2013-10-09 17:00,,PT_Normal,,,,,paQLOuktZk6AX97nMg6YPw,kw/VUSnKTyGWt7Ah1JEw9w,,,Y,0,0,,,2013-06-23 13:00,2013-06-23 13:00,admin,admin
555,85640,1346,11534,1473,1,0,N,N,N,CP_Phys,TT_Task,DT_FixedDrtn,RV_OK,TK_NotStart,A13390,Removal of Internal Side Shutters,,0,0,30,0,281.052631,281.052631,30,31.578947,0,31.578947,,,,2013-10-12 15:00,2013-10-15 15:00,,2013-10-12 15:00,2013-10-15 15:00,2013-10-12 15:00,2013-10-15 15:00,2013-10-12 15:00,2013-10-15 15:00,,2013-10-12 15:00,2013-10-15 15:00,,PT_Normal,,,,,Uq1CtI4Fgk+k4vjpY8yCTA,iDIdVDOLTZijaUoGvel5lw,,,Y,0,0,,,2013-06-23 13:00,2013-06-23 13:00,admin,admin
556,85641,1346,11534,1473,1,0,N,N,N,CP_Phys,TT_Task,DT_FixedDrtn,RV_OK,TK_NotStart,A13400,Post Tensioning Operation,,0,0,27,0,16,16,27,0,0,0,,,,2013-11-23 12:00,2013-11-26 09:00,,2013-11-23 12:00,2013-11-26 09:00,2013-11-23 12:00,2013-11-26 09:00,2013-11-23 12:00,2013-11-26 09:00,,2013-11-23 12:00,2013-11-26 09:00,,PT_Normal,,,,,RV6IBtATfEa6Jdy8i7uA2A,dqMIARFHS9+4WkCd0iGEDg,,,Y,0,0,,,2013-06-23 13:00,2013-06-23 13:00,admin,admin
557,85642,1346,11534,1473,1,0,N,N,N,CP_Phys,TT_Task,DT_FixedDrtn,RV_OK,TK_NotStart,A13410,Erection of Scaffolding for Span - 1,,120,0,30,0,5266.666667,5266.666667,30,800,0,800,,,,2013-09-01 12:00,2013-09-04 12:00,,2013-08-14 12:00,2013-08-19 12:00,2013-08-14 12:00,2013-08-19 12:00,2013-08-14 12:00,2013-08-19 12:00,,2013-09-01 12:00,2013-09-04 12:00,,PT_Normal,,,,,0D7FpmtDCESFMPZhtmzZ7Q,JPXqtSkLRR6AFCZYFL8UAg,,,N,0,0,,,2013-06-23 13:00,2013-06-23 13:00,admin,admin
558,85643,1346,11534,1473,1,0,N,N,N,CP_Phys,TT_Task,DT_FixedDrtn,RV_OK,TK_NotStart,A13420,Approval for Scaffolding Design and Drawing,,560,440,140,0,0,0,140,0,0,0,,,,2013-08-12 12:00,2013-09-01 12:00,,2013-05-22 12:00,2013-06-11 12:00,2013-05-22 12:00,2013-06-11 12:00,2013-05-22 12:00,2013-06-11 12:00,,2013-08-12 12:00,2013-09-01 12:00,,PT_Normal,,,,,dYI97arHxUmZU+Nkd01EIA,OwQh+OfLRH2iM7HAyoF/8Q,,,N,0,0,,,2013-06-23 13:00,2013-06-23 13:00,admin,admin
559,85644,1346,11534,1473,1,0,N,N,N,CP_Phys,TT_Task,DT_FixedDrtn,RV_OK,TK_NotStart,A13430,Preparation & Submission of Scaffolding Design and Drawing for Approval,,560,0,40,0,0,0,40,0,0,0,,,,2013-08-04 12:00,2013-08-12 12:00,,2013-05-18 12:00,2013-05-22 12:00,2013-05-18 12:00,2013-05-22 12:00,2013-05-18 12:00,2013-05-22 12:00,,2013-08-04 12:00,2013-08-12 12:00,,PT_Normal,,,,,2OqCff7NgEK47F18uwLq/g,lKAnxa5JRHe6+qJ9FCAD3Q,,,N,0,0,,,2013-06-23 13:00,2013-06-23 13:00,admin,admin
560,85645,1346,11534,1473,1,0,N,N,N,CP_Phys,TT_Task,DT_FixedDrtn,RV_OK,TK_NotStart,A13440,Preparation & Submission of Shop Drawing for Box Girder,,373,0,40,0,0,0,40,0,0,0,,,,2013-06-15 10:00,2013-06-19 10:00,,2013-04-23 07:00,2013-04-28 17:00,2013-04-23 07:00,2013-04-28 17:00,2013-04-23 07:00,2013-04-28 17:00,,2013-06-15 10:00,2013-06-19 10:00,,PT_Normal,,,,,lycqIJcKG0ODMjEl8VIodQ,HXoECKcZSjG/jyD4P5ca4w,,,N,0,0,,,2013-06-23 13:00,2013-06-23 13:00,admin,admin
561,85646,1346,11534,1473,1,0,N,N,N,CP_Phys,TT_Task,DT_FixedDrtn,RV_OK,TK_NotStart,A13450,Approval of Shop Drawing for Box Girder,,560,0,135,0,0,0,135,0,0,0,,,,2013-07-16 07:00,2013-08-04 12:00,,2013-04-29 07:00,2013-05-18 12:00,2013-04-29 07:00,2013-05-18 12:00,2013-04-29 07:00,2013-05-18 12:00,,2013-07-16 07:00,2013-08-04 12:00,,PT_Normal,,,,,QIMQXeKMjkuWVnO47I1HCA,Sqr+zr2XRFae3l/LZLRMwQ,,,N,0,0,,,2013-06-23 13:00,2013-06-23 13:00,admin,admin
562,85647,1346,11534,1473,1,0,N,N,N,CP_Phys,TT_Task,DT_FixedDrtn,RV_OK,TK_NotStart,A13460,Erection of Scaffolding for Span - 3,2969,0,0,30,0,510,510,30,30,0,30,,,,2013-09-09 12:00,2013-09-14 12:00,,2013-09-09 12:00,2013-09-14 12:00,2013-09-09 12:00,2013-09-14 12:00,2013-09-09 12:00,2013-09-14 12:00,,2013-09-09 12:00,2013-09-14 12:00,,PT_Normal,,,,,/WCadppiLkCeolDy4qAU3g,37pxiFCRRR2+L19L/+5cuA,,,Y,0,0,,,2013-06-23 13:00,2013-06-23 13:00,admin,admin
563,85648,1346,11534,1473,1,0,N,N,N,CP_Phys,TT_Task,DT_FixedDrtn,RV_OK,TK_NotStart,A13470,Erection of Scaffolding for Span - 2,2969,18,0,30,0,306,306,30,18,0,18,,,,2013-09-17 10:00,2013-09-22 10:00,,2013-09-15 12:00,2013-09-18 12:00,2013-09-15 12:00,2013-09-18 12:00,2013-09-15 12:00,2013-09-18 12:00,,2013-09-17 10:00,2013-09-22 10:00,,PT_Normal,,,,,9Uo9TgU7SkqDLNSU9zKJyg,Edp8i/B9SWeDIn2vSLnHMQ,,,N,0,0,,,2013-06-23 13:00,2013-06-23 13:00,admin,admin
564,85649,1346,11534,1473,1,0,N,N,N,CP_Phys,TT_Task,DT_FixedDrtn,RV_OK,TK_NotStart,A13480,Reinforcement Fixing for Stage - 1 & 2 at Span - 2,2984,0,0,30,0,342.857143,342.857143,30,34.285714,0,34.285714,,,,2013-09-30 10:00,2013-10-05 10:00,,2013-09-30 10:00,2013-10-05 10:00,2013-09-30 10:00,2013-10-05 10:00,2013-09-30 10:00,2013-10-05 10:00,,2013-09-30 10:00,2013-10-05 10:00,,PT_Normal,,,,,DXheFz/r20+1YFLBHReMRA,dL9MLnT5TPaFHaRrFpxi+w,,,Y,0,0,,,2013-06-23 13:00,2013-06-23 13:00,admin,admin
565,85650,1346,11534,1473,1,0,N,N,N,CP_Phys,TT_Task,DT_FixedDrtn,RV_OK,TK_NotStart,A13490,Reinforcement Cutting & Bending for Stage - 3,2984,1023,0,60,0,448.484848,448.484848,60,60.60606,0,60.60606,,,,2013-10-20 15:00,2013-10-28 15:00,,2013-05-27 12:00,2013-06-04 12:00,2013-05-27 12:00,2013-06-04 12:00,2013-05-27 12:00,2013-06-04 12:00,,2013-10-20 15:00,2013-10-28 15:00,,PT_Normal,,,,,k09ddRdFNUi3gJsurfgqlg,q0hfN6VCSP+cHBtPMzxlYg,,,N,0,0,,,2013-06-23 13:00,2013-06-23 13:00,admin,admin
566,85651,1346,11534,1473,1,0,N,N,N,CP_Phys,TT_Task,DT_FixedDrtn,RV_OK,TK_NotStart,A13500,Reinforcement Fixing for Stage - 3,2984,0,0,30,0,570,570,30,30,0,30,,,,2013-10-20 15:00,2013-10-23 15:00,,2013-10-20 15:00,2013-10-23 15:00,2013-10-20 15:00,2013-10-23 15:00,2013-10-20 15:00,2013-10-23 15:00,,2013-10-20 15:00,2013-10-23 15:00,,PT_Normal,,,,,4Xwj3MbBzkWti3Ae8vKbWA,iVFphvxfSmSqwFXinXoSkQ,,,Y,0,0,,,2013-06-23 13:00,2013-06-23 13:00,admin,admin
567,85652,1346,11534,1473,1,0,N,N,N,CP_Phys,TT_Task,DT_FixedDrtn,RV_OK,TK_NotStart,A13510,Inner Formwork for Stage - 3,2971,0,0,30,0,450,450,30,60,0,60,,,,2013-10-15 15:00,2013-10-20 15:00,,2013-10-15 15:00,2013-10-20 15:00,2013-10-15 15:00,2013-10-20 15:00,2013-10-15 15:00,2013-10-20 15:00,,2013-10-15 15:00,2013-10-20 15:00,,PT_Normal,,,,,PD+UnXB5OE6rJf1xVfn2QA,jcvIFmn2SZWjSRwTTPnjAg,,,Y,0,0,,,2013-06-23 13:00,2013-06-23 13:00,admin,admin
568,85653,1346,11534,1473,1,0,N,N,N,CP_Phys,TT_Task,DT_FixedDrtn,RV_OK,TK_NotStart,A13520,Concreting for Stage - 3,2971,0,0,9,0,126,126,9,108,0,108,,,,2013-10-27 13:00,2013-10-28 12:00,,2013-10-27 13:00,2013-10-28 12:00,2013-10-27 13:00,2013-10-28 12:00,2013-10-27 13:00,2013-10-28 12:00,,2013-10-27 13:00,2013-10-28 12:00,,PT_Normal,,,,,d9cEWkEhuk6IXEx9Jw1sbg,rF+5CXXqQ4mO6NXNEuyrSA,,,Y,0,0,,,2013-06-23 13:00,2013-06-23 13:00,admin,admin
569,85654,1346,11534,1473,1,0,N,N,N,CP_Phys,TT_Task,DT_FixedDrtn,RV_OK,TK_NotStart,A13530,Grouting for Post Tensioned Ducts,,0,0,27,0,0,0,27,0,0,0,,,,2013-11-26 09:00,2013-11-30 16:00,,2013-11-26 09:00,2013-11-30 16:00,2013-11-26 09:00,2013-11-30 16:00,2013-11-26 09:00,2013-11-30 16:00,,2013-11-26 09:00,2013-11-30 16:00,,PT_Normal,,,,,S/z+C1scUUiy66AlUMOuuw,fuVBpZmtS92N7Utkrr9ZeQ,,,Y,0,0,,,2013-06-23 13:00,2013-06-23 13:00,admin,admin
570,85655,1346,11534,1473,1,0,N,N,N,CP_Phys,TT_Task,DT_FixedDrtn,RV_OK,TK_NotStart,A13540,Preparation & Submission of Bar Schedule Drawing,,868,0,40,0,0,0,40,0,0,0,,,,2013-08-31 15:00,2013-09-04 15:00,,2013-04-29 07:00,2013-05-04 17:00,2013-04-29 07:00,2013-05-04 17:00,2013-04-29 07:00,2013-05-04 17:00,,2013-08-31 15:00,2013-09-04 15:00,,PT_Normal,,,,,zE12MQCht0G2djda133A4g,33nOreN7Qk6rOC6M4AM4Jw,,,N,0,0,,,2013-06-23 13:00,2013-06-23 13:00,admin,admin
571,85656,1346,11534,1473,1,0,N,N,N,CP_Phys,TT_Task,DT_FixedDrtn,RV_OK,TK_NotStart,A13550,Approval of Bar Schedule Drawing,,868,0,135,0,0,0,135,0,0,0,,,,2013-09-04 15:00,2013-09-24 10:00,,2013-05-05 07:00,2013-05-22 12:00,2013-05-05 07:00,2013-05-22 12:00,2013-05-05 07:00,2013-05-22 12:00,,2013-09-04 15:00,2013-09-24 10:00,,PT_Normal,,,,,yWLYAsUPU0KCpKAb7L0yxw,6qH1xctrT0STk9qKqOmD/Q,,,N,0,0,,,2013-06-23 13:00,2013-06-23 13:00,admin,admin
572,85657,1346,11534,1473,1,0,N,N,N,CP_Phys,TT_Task,DT_FixedDrtn,RV_OK,TK_NotStart,A13560,Backfilling & Ground Preprationfor Abutment & Piers at Span - 1,3001,120,0,20,0,80,80,20,80.000001,0,80.000001,,,,2013-08-28 12:00,2013-09-01 12:00,,2013-08-12 12:00,2013-08-14 12:00,2013-08-12 12:00,2013-08-14 12:00,2013-08-12 12:00,2013-08-14 12:00,,2013-08-28 12:00,2013-09-01 12:00,,PT_Normal,,,,,zXsppUsKYEOu94bsO9NhHQ,ELF//IaBSxa4TnRTDfcuDA,,,N,0,0,,,2013-06-23 13:00,2013-06-23 13:00,admin,admin
573,85658,1346,11534,1473,1,0,N,N,N,CP_Phys,TT_Task,DT_FixedDrtn,RV_OK,TK_NotStart,A13570,"Bearings Installation for Pier - 1 A,B & Abutment - 1",2971,810,0,18,0,54,54,18,18,0,18,,,,2013-09-10 12:00,2013-09-14 10:00,,2013-05-18 12:00,2013-05-20 10:00,2013-05-18 12:00,2013-05-20 10:00,2013-05-18 12:00,2013-05-20 10:00,,2013-09-10 12:00,2013-09-14 10:00,,PT_Normal,,,,,Ui/lNGLWnEKh1kaw/fPuWw,kAPIWGdOQ7m+N+buTMb5Ew,,,N,0,0,,,2013-06-23 13:00,2013-06-23 13:00,admin,admin
574,85659,1346,11534,1473,1,0,N,N,N,CP_Phys,TT_Task,DT_FixedDrtn,RV_OK,TK_NotStart,A13580,Formwork for Stage - 1 at Span - 3,2971,810,0,50,0,1100,1100,50,100,0,100,,,,2013-09-15 10:00,2013-09-22 10:00,,2013-05-21 10:00,2013-05-28 10:00,2013-05-21 10:00,2013-05-28 10:00,2013-05-21 10:00,2013-05-28 10:00,,2013-09-15 10:00,2013-09-22 10:00,,PT_Normal,,,,,l6cHRdYzA0GT0ERQZOtJeA,4zNGOJkOQNqjNsKp6qj8QQ,,,N,0,0,,,2013-06-23 13:00,2013-06-23 13:00,admin,admin
575,85660,1346,11534,1473,1,0,N,N,N,CP_Phys,TT_Task,DT_FixedDrtn,RV_OK,TK_NotStart,A13590,"Bearings Installation for Pier - 2 A,B & Abutment - 2",2971,0,0,18,0,54,54,18,18,0,18,,,,2013-09-15 12:00,2013-09-17 10:00,,2013-09-15 12:00,2013-09-17 10:00,2013-09-15 12:00,2013-09-17 10:00,2013-09-15 12:00,2013-09-17 10:00,,2013-09-15 12:00,2013-09-17 10:00,,PT_Normal,,,,,nx4nF2qTH0yapf0kEoYvxQ,wTAyvLsLQKWG7b6ZKjXiGA,,,Y,0,0,,,2013-06-23 13:00,2013-06-23 13:00,admin,admin
576,85661,1346,11534,1473,1,0,N,N,N,CP_Phys,TT_Task,DT_FixedDrtn,RV_OK,TK_NotStart,A13600,Formwork for Stage - 1 at Span - 1,2971,0,0,30,0,330,330,30,30,0,30,,,,2013-09-22 10:00,2013-09-25 10:00,,2013-09-22 10:00,2013-09-25 10:00,2013-09-22 10:00,2013-09-25 10:00,2013-09-22 10:00,2013-09-25 10:00,,2013-09-22 10:00,2013-09-25 10:00,,PT_Normal,,,,,9W1jgb4Cf0CfE88k6nIRnw,YtpIEFRZT6SbqcJyqq3vFg,,,Y,0,0,,,2013-06-23 13:00,2013-06-23 13:00,admin,admin
577,85662,1346,11534,1473,1,0,N,N,N,CP_Phys,TT_Task,DT_FixedDrtn,RV_OK,TK_NotStart,A13610,Reinforcement Fixing for Stage - 1 & 2 at Span - 3,2984,10,10,50,0,800,800,50,80,0,80,,,,2013-09-28 10:00,2013-10-05 10:00,,2013-09-25 10:00,2013-10-02 10:00,2013-09-25 10:00,2013-10-02 10:00,2013-09-25 10:00,2013-10-02 10:00,,2013-09-28 10:00,2013-10-05 10:00,,PT_Normal,,,,,1TWtm65wfUuglPjSxNQJsg,sR+OyEp/QmGuUrny3Tu4oA,,,N,0,0,,,2013-06-23 13:00,2013-06-23 13:00,admin,admin
578,85663,1346,11534,1473,1,0,N,N,N,CP_Phys,TT_Task,DT_FixedDrtn,RV_OK,TK_NotStart,A13620,Reinforcement Fixing for Stage - 1 & 2 at Span - 1,2984,830,830,70,0,2240,2240,70,224,0,224,,,,2013-09-24 10:00,2013-10-05 10:00,,2013-05-28 10:00,2013-06-08 10:00,2013-05-28 10:00,2013-06-08 10:00,2013-05-28 10:00,2013-06-08 10:00,,2013-09-24 10:00,2013-10-05 10:00,,PT_Normal,,,,,c1wYIt5i30Osh2K7z3mLQw,1BMZdc2rSXWzTGlbTg779g,,,N,0,0,,,2013-06-23 13:00,2013-06-23 13:00,admin,admin
579,85664,1346,11534,1473,1,0,N,N,N,CP_Phys,TT_Task,DT_FixedDrtn,RV_OK,TK_NotStart,A13630,Provision of Prestressing Ducts,2984,0,0,27,0,162,162,27,27,0,27,,,,2013-09-30 13:00,2013-10-05 10:00,,2013-09-30 13:00,2013-10-05 10:00,2013-09-30 13:00,2013-10-05 10:00,2013-09-30 13:00,2013-10-05 10:00,,2013-09-30 13:00,2013-10-05 10:00,,PT_Normal,,,,,Ldv9J3wQ6EK1XlGkVm9mvg,dIDbLr3gSMChMfTYSrsjiw,,,Y,0,0,,,2013-06-23 13:00,2013-06-23 13:00,admin,admin
580,85665,1346,11534,1473,1,0,N,N,N,CP_Phys,TT_Task,DT_FixedDrtn,RV_OK,TK_NotStart,A13640,Side/Edge Shutters for Deck Slab,2969,0,0,18,0,396,396,18,36,0,36,,,,2013-10-23 15:00,2013-10-27 13:00,,2013-10-23 15:00,2013-10-27 13:00,2013-10-23 15:00,2013-10-27 13:00,2013-10-23 15:00,2013-10-27 13:00,,2013-10-23 15:00,2013-10-27 13:00,,PT_Normal,,,,,6g405CCX70mYt/P1p2sq+A,5VxJo8+TQciHlLGiFtE15g,,,Y,0,0,,,2013-06-23 13:00,2013-06-23 13:00,admin,admin
581,85666,1346,11534,1474,1,0,N,N,N,CP_Phys,TT_Task,DT_FixedDrtn,RV_OK,TK_NotStart,A13650,Curing for Deck Slab,,0,0,140,0,0,0,140,0,0,0,,,,2013-10-28 12:00,2013-11-11 12:00,,2013-10-28 12:00,2013-11-11 12:00,2013-10-28 12:00,2013-11-11 12:00,2013-10-28 12:00,2013-11-11 12:00,,2013-10-28 12:00,2013-11-11 12:00,,PT_Normal,,,,,bQXVlVn8Q0esjB9waYVBmA,kHTNjCZaQRKZvcRNDoXMeQ,,,Y,0,0,,,2013-06-23 13:00,2013-06-23 13:00,admin,admin
582,85667,1346,11534,1473,1,0,N,N,N,CP_Phys,TT_Task,DT_FixedDrtn,RV_OK,TK_NotStart,A13660,Removal of Inner Formwork For Stage - 3,2969,0,0,30,0,160,160,30,20,0,20,,,,2013-11-11 12:00,2013-11-16 12:00,,2013-11-11 12:00,2013-11-16 12:00,2013-11-11 12:00,2013-11-16 12:00,2013-11-11 12:00,2013-11-16 12:00,,2013-11-11 12:00,2013-11-16 12:00,,PT_Normal,,,,,Niy9cFBxyEqHfYf7YIbdQg,7c6WueL5TdW19XUKX1Gw5g,,,Y,0,0,,,2013-06-23 13:00,2013-06-23 13:00,admin,admin
583,85668,1346,11534,1473,1,0,N,N,N,CP_Phys,TT_Task,DT_FixedDrtn,RV_OK,TK_NotStart,A13670,Removal of Side/Edge Shutters for Deck Slab,2969,50,30,70,0,196,196,70,28,0,28,,,,2013-11-04 12:00,2013-11-13 12:00,,2013-10-28 12:00,2013-11-06 12:00,2013-10-28 12:00,2013-11-06 12:00,2013-10-28 12:00,2013-11-06 12:00,,2013-11-04 12:00,2013-11-13 12:00,,PT_Normal,,,,,/RwTwsHyBkStW2dDjvEhPQ,mvdaFlB7QhaPNEIT978m9A,,,N,0,0,,,2013-06-23 13:00,2013-06-23 13:00,admin,admin
584,85669,1346,11534,1473,1,0,N,N,N,CP_Phys,TT_Task,DT_FixedDrtn,RV_OK,TK_NotStart,A13680,Reinforcement Fixing for Crash Barriers & Street Light Foundations,2971,20,20,40,0,520,520,40,200,0,200,,,,2013-11-13 12:00,2013-11-23 12:00,,2013-11-11 12:00,2013-11-17 12:00,2013-11-11 12:00,2013-11-17 12:00,2013-11-11 12:00,2013-11-17 12:00,,2013-11-13 12:00,2013-11-23 12:00,,PT_Normal,,,,,cZ6nZfGfzUul9Z/8nan6aw,stS7VkIhRQyR54rW419WdA,,,N,0,0,,,2013-06-23 13:00,2013-06-23 13:00,admin,admin
585,85670,1346,11534,1473,1,0,N,N,N,CP_Phys,TT_Task,DT_FixedDrtn,RV_OK,TK_NotStart,A13690,Dismantling of Complete Scaffolding,2971,0,0,30,0,330,330,30,30,0,30,,,,2013-12-16 16:00,2013-12-21 16:00,,2013-12-16 16:00,2013-12-21 16:00,2013-12-16 16:00,2013-12-21 16:00,2013-12-16 16:00,2013-12-21 16:00,,2013-12-16 16:00,2013-12-21 16:00,,PT_Normal,,,,,tlUaTc2Cj0Ovgpe36NNn7A,PzN9S02kQQaf+zlkftFWzQ,,,Y,0,0,,,2013-06-23 13:00,2013-06-23 13:00,admin,admin
586,85671,1346,11534,1473,1,0,N,N,N,CP_Phys,TT_Task,DT_FixedDrtn,RV_OK,TK_NotStart,A13700,Precast Concrete Curbs for Side Walk,2981,60,60,30,0,112.5,112.5,30,0,0,0,,,,2013-12-08 16:00,2013-12-11 16:00,,2013-11-30 16:00,2013-12-03 16:00,2013-11-30 16:00,2013-12-03 16:00,2013-11-30 16:00,2013-12-03 16:00,,2013-12-08 16:00,2013-12-11 16:00,,PT_Normal,,,,,bMAWIgJ7PUCu4vaE4D2kQQ,YXRGAm8/SfWk3XkUW0zBpg,,,N,0,0,,,2013-06-23 13:00,2013-06-23 13:00,admin,admin
587,85672,1346,11534,1473,1,0,N,N,N,CP_Phys,TT_Task,DT_FixedDrtn,RV_OK,TK_NotStart,A13710,Precast Concrete Tile Paving for Side Walk,2981,0,0,30,0,128.571429,128.571429,30,0,0,0,,,,2013-12-11 16:00,2013-12-16 16:00,,2013-12-11 16:00,2013-12-16 16:00,2013-12-11 16:00,2013-12-16 16:00,2013-12-11 16:00,2013-12-16 16:00,,2013-12-11 16:00,2013-12-16 16:00,,PT_Normal,,,,,9iREsOvXcU6Tp8u3Dbj2Yw,WLNMCv+YQNGNkC8Ktgg4EQ,,,Y,0,0,,,2013-06-23 13:00,2013-06-23 13:00,admin,admin
588,85673,1346,11534,1473,1,0,N,N,N,CP_Phys,TT_Task,DT_FixedDrtn,RV_OK,TK_NotStart,A13720,Painting Works for Bridge,2981,0,0,30,0,120,120,30,0,0,0,,,,2013-12-11 16:00,2013-12-16 16:00,,2013-12-11 16:00,2013-12-16 16:00,2013-12-11 16:00,2013-12-16 16:00,2013-12-11 16:00,2013-12-16 16:00,,2013-12-11 16:00,2013-12-16 16:00,,PT_Normal,,,,,tmALar3lL0KIGbQaud+oxA,/QPJ90zHTE+ri35wq4m1IQ,,,Y,0,0,,,2013-06-23 13:00,2013-06-23 13:00,admin,admin
589,85674,1346,11534,1473,1,0,N,N,N,CP_Phys,TT_Task,DT_FixedDrtn,RV_OK,TK_NotStart,A13730,Provision of Access Doors,2969,87,87,30,0,26.666666,26.666666,30,0,0,0,,,,2013-12-08 16:00,2013-12-11 16:00,,2013-11-26 09:00,2013-12-01 09:00,2013-11-26 09:00,2013-12-01 09:00,2013-11-26 09:00,2013-12-01 09:00,,2013-12-08 16:00,2013-12-11 16:00,,PT_Normal,,,,,Rlx6PcgfdEC+tRGqPeDdpw,QfOhs4NSR7uGzvpLWJdcgg,,,N,0,0,,,2013-06-23 13:00,2013-06-23 13:00,admin,admin
590,85675,1346,11534,1473,1,0,N,N,N,CP_Phys,TT_Task,DT_FixedDrtn,RV_OK,TK_NotStart,A13740,Removal of Out Side Shutters,2969,0,0,30,0,192,192,30,24,0,24,,,,2013-11-16 12:00,2013-11-23 12:00,,2013-11-16 12:00,2013-11-23 12:00,2013-11-16 12:00,2013-11-23 12:00,2013-11-16 12:00,2013-11-23 12:00,,2013-11-16 12:00,2013-11-23 12:00,,PT_Normal,,,,,yF3C6dn6pkef3gZP0C7VpQ,k8rc+VeCTPuJULEQodeKXA,,,Y,0,0,,,2013-06-23 13:00,2013-06-23 13:00,admin,admin
591,85676,1346,11534,1473,1,0,N,N,N,CP_Phys,TT_Task,DT_FixedDrtn,RV_OK,TK_NotStart,A13750,Provision of Ducts Within Bridge Box,2984,0,0,30,0,31.999999,31.999999,30,5.333333,0,5.333333,,,,2013-11-16 12:00,2013-11-23 12:00,,2013-11-16 12:00,2013-11-23 12:00,2013-11-16 12:00,2013-11-23 12:00,2013-11-16 12:00,2013-11-23 12:00,,2013-11-16 12:00,2013-11-23 12:00,,PT_Normal,,,,,5UPvTAQD60yPtzPhQVqyaQ,sOSkD5DpRm6Bgs1ODOL+/w,,,Y,0,0,,,2013-06-23 13:00,2013-06-23 13:00,admin,admin
592,85677,1346,11534,1473,1,0,N,N,N,CP_Phys,TT_Task,DT_FixedDrtn,RV_OK,TK_NotStart,A13760,Water Proofing Membrane for Deck Slab,2969,20,20,40,0,80,80,40,0,0,0,,,,2013-11-13 12:00,2013-11-23 12:00,,2013-11-11 12:00,2013-11-17 12:00,2013-11-11 12:00,2013-11-17 12:00,2013-11-11 12:00,2013-11-17 12:00,,2013-11-13 12:00,2013-11-23 12:00,,PT_Normal,,,,,imb4NZD9VUuhdgOi3Zdhfw,fEiUA6kVQtuFjEkMxP0S7Q,,,N,0,0,,,2013-06-23 13:00,2013-06-23 13:00,admin,admin
593,85678,1346,11534,1473,0,0,N,N,N,CP_Phys,TT_FinMile,DT_FixedDrtn,RV_OK,TK_NotStart,A13770,Completion of Box Girder Bridge - East Bound,,0,0,0,0,0,0,0,0,0,0,,,,2013-12-21 16:00,2013-12-21 16:00,,2013-12-21 16:00,2013-12-21 16:00,2013-12-21 16:00,2013-12-21 16:00,2013-12-21 16:00,2013-12-21 16:00,,2013-12-21 16:00,2013-12-21 16:00,,PT_Normal,,,,,oOLzV5LW8EOj1F0A/dAo7g,0WerFbkmT9aN3K9Jkwj4fg,,,Y,0,0,,,2013-06-23 13:00,2013-06-23 13:00,admin,admin
594,85679,1346,11534,1473,1,0,N,N,N,CP_Phys,TT_Task,DT_FixedDrtn,RV_OK,TK_NotStart,A13780,Backfilling & Ground Preprationfor Abutment & Piers at Span - 3,,0,0,20,0,0,0,20,0,0,0,,,,2013-09-07 12:00,2013-09-09 12:00,,2013-09-07 12:00,2013-09-09 12:00,2013-09-07 12:00,2013-09-09 12:00,2013-09-07 12:00,2013-09-09 12:00,,2013-09-07 12:00,2013-09-09 12:00,,PT_Normal,,,,,ai1IhylwYE2ba+foIQhrqw,QnMP+VuHQnG1nJaNMLei0A,,,Y,0,0,,,2013-06-23 13:00,2013-06-23 13:00,admin,admin
595,85680,1346,11534,1473,1,0,N,N,N,CP_Phys,TT_Task,DT_FixedDrtn,RV_OK,TK_NotStart,A13790,Backfilling & Ground Preprationfor Abutment & Piers at Span - 2,,28,10,30,0,0,0,30,0,0,0,,,,2013-09-14 10:00,2013-09-17 10:00,,2013-09-09 12:00,2013-09-14 12:00,2013-09-09 12:00,2013-09-14 12:00,2013-09-09 12:00,2013-09-14 12:00,,2013-09-14 10:00,2013-09-17 10:00,,PT_Normal,,,,,vqBUK9sLXkyRAdGgcXpVyg,bvaMnSL+ThyZuKbj6K/A2w,,,N,0,0,,,2013-06-23 13:00,2013-06-23 13:00,admin,admin
596,85681,1346,11534,1473,1,0,N,N,N,CP_Phys,TT_Task,DT_FixedDrtn,RV_OK,TK_NotStart,A13800,Concreting for Crash Barriers & Street Light Foundations by Using Prefabricated Molds,,0,0,90,0,0,0,90,0,0,0,,,,2013-11-30 16:00,2013-12-11 16:00,,2013-11-30 16:00,2013-12-11 16:00,2013-11-30 16:00,2013-12-11 16:00,2013-11-30 16:00,2013-12-11 16:00,,2013-11-30 16:00,2013-12-11 16:00,,PT_Normal,,,,,V8NzdNM3U06g0mADX5CABA,wCkARTX6QcSh22397iSLqw,,,Y,0,0,,,2013-06-23 13:00,2013-06-23 13:00,admin,admin
597,85682,1346,11534,1473,1,0,N,N,N,CP_Phys,TT_Task,DT_FixedDrtn,RV_OK,TK_NotStart,A13810,Reinforcement Cutting & Bending for Crash Barriers & Street Light Foundations,,1150,1130,150,0,0,0,150,0,0,0,,,,2013-11-11 12:00,2013-12-04 12:00,,2013-06-01 12:00,2013-06-22 12:00,2013-06-01 12:00,2013-06-22 12:00,2013-06-01 12:00,2013-06-22 12:00,,2013-11-11 12:00,2013-12-04 12:00,,PT_Normal,,,,,bz+iHnDw8E+0dG7+BPXEXA,zfqW2CltTqOrLAz2qO7+mA,,,N,0,0,,,2013-06-23 13:00,2013-06-23 13:00,admin,admin
598,85683,1346,11534,1473,1,0,N,N,N,CP_Phys,TT_Task,DT_FixedDrtn,RV_OK,TK_NotStart,A15050,"Inspection of Bearings for Pier - 1 A,B & Abutment - 1",3001,810,0,10,0,54,54,10,18,0,18,,,,2013-09-14 10:00,2013-09-15 10:00,,2013-05-20 10:00,2013-05-21 10:00,2013-05-20 10:00,2013-05-21 10:00,2013-05-20 10:00,2013-05-21 10:00,,2013-09-14 10:00,2013-09-15 10:00,,PT_Normal,,,,,sIVLnN9cKkK0Nb/yKVyHIw,tPlAgAoea0Wrx4ssId32kw,,,N,0,0,,,2013-06-23 13:00,2013-06-23 13:00,admin,admin
599,85684,1346,11534,1473,1,0,N,N,N,CP_Phys,TT_Task,DT_FixedDrtn,RV_OK,TK_NotStart,A15060,"Inspection of Bearings for Pier - 2 A,B & Abutment - 2",3001,0,0,30,0,162,162,30,54,0,54,,,,2013-09-17 10:00,2013-09-22 10:00,,2013-09-17 10:00,2013-09-22 10:00,2013-09-17 10:00,2013-09-22 10:00,2013-09-17 10:00,2013-09-22 10:00,,2013-09-17 10:00,2013-09-22 10:00,,PT_Normal,,,,,0+9wkhBmjU6NHqGZUbG90Q,tPlAgAoea0Wrx4ssId32kw,,,Y,0,0,,,2013-06-23 13:00,2013-06-23 13:00,admin,admin
600,85685,1346,11534,1473,1,0,N,N,N,CP_Phys,TT_Task,DT_FixedDrtn,RV_OK,TK_NotStart,A15064,Inspection of Scaffolding for Span - 1,,120,120,30,0,28440,28440,30,4320,0,4320,,,,2013-09-04 12:00,2013-09-09 12:00,,2013-08-19 12:00,2013-08-24 12:00,2013-08-19 12:00,2013-08-24 12:00,2013-08-19 12:00,2013-08-24 12:00,,2013-09-04 12:00,2013-09-09 12:00,,PT_Normal,,,,,NA1U8YC9F0G+bk6FlVKkcg,omni7hnXm0mIYO9hp/LnxQ,,,N,0,0,,,2013-06-23 13:00,2013-06-23 13:00,admin,admin
601,85686,1346,11534,1473,1,0,N,N,N,CP_Phys,TT_Task,DT_FixedDrtn,RV_OK,TK_NotStart,A15065,Inspection of Scaffolding for Span - 2,2969,18,18,30,0,2754,2754,30,162,0,162,,,,2013-09-22 10:00,2013-09-25 10:00,,2013-09-18 12:00,2013-09-23 12:00,2013-09-18 12:00,2013-09-23 12:00,2013-09-18 12:00,2013-09-23 12:00,,2013-09-22 10:00,2013-09-25 10:00,,PT_Normal,,,,,2AOYk1i1AEmYyV3QoZE28w,+O0BQQwVzk6j748F6hwdzw,,,N,0,0,,,2013-06-23 13:00,2013-06-23 13:00,admin,admin
602,85687,1346,11534,1473,1,0,N,N,N,CP_Phys,TT_Task,DT_FixedDrtn,RV_OK,TK_NotStart,A15066,Inspection of Scaffolding for Span - 3,2969,0,0,10,0,918,918,10,54,0,54,,,,2013-09-14 12:00,2013-09-15 12:00,,2013-09-14 12:00,2013-09-15 12:00,2013-09-14 12:00,2013-09-15 12:00,2013-09-14 12:00,2013-09-15 12:00,,2013-09-14 12:00,2013-09-15 12:00,,PT_Normal,,,,,elwJJXlh1U6FL/TUI2caTw,ln0ft6DDX0uP1fkB1q6AUg,,,Y,0,0,,,2013-06-23 13:00,2013-06-23 13:00,admin,admin
603,85688,1346,11526,1473,1,0,N,N,N,CP_Phys,TT_Task,DT_FixedDrtn,RV_OK,TK_NotStart,B1510,MIR for Curb Paint,,1408,1359,20,0,0,0,20,0,0,0,,,,2013-12-31 15:00,2014-01-04 15:00,,2013-06-12 07:00,2013-06-15 17:00,2013-06-12 07:00,2013-06-15 17:00,2013-06-12 07:00,2013-06-15 17:00,,2013-12-31 15:00,2014-01-04 15:00,,PT_Normal,,,,,9QmI/wz+iEyVRdzAFKdr8A,oY3aFm7LxUGSyygeJAGjyg,,,N,0,0,,,2013-06-23 13:00,2013-06-23 13:00,admin,admin
604,85689,1346,11526,1473,1,0,N,N,N,CP_Phys,TT_Task,DT_FixedDrtn,RV_OK,TK_NotStart,B1520,MAR for Curb Paint,,1408,0,220,0,0,0,220,0,0,0,,,,2013-11-23 15:00,2013-12-23 15:00,,2013-05-05 07:00,2013-06-03 17:00,2013-05-05 07:00,2013-06-03 17:00,2013-05-05 07:00,2013-06-03 17:00,,2013-11-23 15:00,2013-12-23 15:00,,PT_Normal,,,,,7/RuJUH5C0qH+y6u6SsW0w,Vp4zhIWkjUaEGhQirQ86SQ,,,N,0,0,,,2013-06-23 13:00,2013-06-23 13:00,admin,admin
605,85690,1346,11526,1474,1,0,N,N,N,CP_Phys,TT_Task,DT_FixedDrtn,RV_OK,TK_NotStart,B1530,Procurment  for Curb Paint,,2028,0,80,0,0,0,80,0,0,0,,,,2013-12-23 15:00,2013-12-31 15:00,,2013-06-04 07:00,2013-06-11 17:00,2013-06-04 07:00,2013-06-11 17:00,2013-06-04 07:00,2013-06-11 17:00,,2013-12-23 15:00,2013-12-31 15:00,,PT_Normal,,,,,1F83sKdUzESN6i0Nrvq3Dw,s3qLyuJ8A0SDHFpqIZ1oEQ,,,N,0,0,,,2013-06-23 13:00,2013-06-23 13:00,admin,admin
606,85691,1346,11526,1473,1,0,N,N,N,CP_Phys,TT_Task,DT_FixedDrtn,RV_OK,TK_NotStart,B3240,MIR for End Anchorage,,1328,1319,20,0,0,0,20,0,0,0,,,,2013-12-25 15:00,2013-12-29 15:00,,2013-06-18 07:00,2013-06-19 17:00,2013-06-18 07:00,2013-06-19 17:00,2013-06-18 07:00,2013-06-19 17:00,,2013-12-25 15:00,2013-12-29 15:00,,PT_Normal,,,,,isfPakwWekGWaKI+sdwPdw,QzVbKOeE30+Fk5waDnhRcA,,,N,0,0,,,2013-06-23 13:00,2013-06-23 13:00,admin,admin
607,85692,1346,11526,1473,1,0,N,N,N,CP_Phys,TT_Task,DT_FixedDrtn,RV_OK,TK_NotStart,B3250,MAR for End Anchorage,,1328,0,220,0,0,0,220,0,0,0,,,,2013-11-09 15:00,2013-12-11 15:00,,2013-05-05 07:00,2013-06-03 17:00,2013-05-05 07:00,2013-06-03 17:00,2013-05-05 07:00,2013-06-03 17:00,,2013-11-09 15:00,2013-12-11 15:00,,PT_Normal,,,,,BAS4KhxqDEWwseEgQKMcgQ,P4CdPOfWT0SKnpeNjlQ2YQ,,,N,0,0,,,2013-06-23 13:00,2013-06-23 13:00,admin,admin
608,85693,1346,11526,1474,1,0,N,N,N,CP_Phys,TT_Task,DT_FixedDrtn,RV_OK,TK_NotStart,B3260,Procurment  for End Anchorage,,1908,0,140,0,0,0,140,0,0,0,,,,2013-12-11 15:00,2013-12-25 15:00,,2013-06-04 07:00,2013-06-17 17:00,2013-06-04 07:00,2013-06-17 17:00,2013-06-04 07:00,2013-06-17 17:00,,2013-12-11 15:00,2013-12-25 15:00,,PT_Normal,,,,,HUuRLvivnESCOGbL0NTAgg,naEeyYErYEGH8Cap3Ffecg,,,N,0,0,,,2013-06-23 13:00,2013-06-23 13:00,admin,admin
609,85694,1346,11526,1473,1,0,N,N,N,CP_Phys,TT_Task,DT_FixedDrtn,RV_OK,TK_NotStart,B3270,MIR for Trump Cone & Wedge,,1328,1319,20,0,0,0,20,0,0,0,,,,2013-12-25 15:00,2013-12-29 15:00,,2013-06-18 07:00,2013-06-19 17:00,2013-06-18 07:00,2013-06-19 17:00,2013-06-18 07:00,2013-06-19 17:00,,2013-12-25 15:00,2013-12-29 15:00,,PT_Normal,,,,,A3cCGm5h7kaeA8MRroNlHw,yxb53itCmUSAUQ3Q3aIeYg,,,N,0,0,,,2013-06-23 13:00,2013-06-23 13:00,admin,admin
610,85695,1346,11526,1473,1,0,N,N,N,CP_Phys,TT_Task,DT_FixedDrtn,RV_OK,TK_NotStart,B3280,MAR for Trump Cone & Wedge,,1328,0,220,0,0,0,220,0,0,0,,,,2013-11-09 15:00,2013-12-11 15:00,,2013-05-05 07:00,2013-06-03 17:00,2013-05-05 07:00,2013-06-03 17:00,2013-05-05 07:00,2013-06-03 17:00,,2013-11-09 15:00,2013-12-11 15:00,,PT_Normal,,,,,prQRlMaUUE2twKP65iuGaA,y6JU8wlnz0ylkxkFzvyZ9g,,,N,0,0,,,2013-06-23 13:00,2013-06-23 13:00,admin,admin
611,85696,1346,11526,1474,1,0,N,N,N,CP_Phys,TT_Task,DT_FixedDrtn,RV_OK,TK_NotStart,B3290,Procurment  for Trump Cone & Wedge,,1908,0,140,0,0,0,140,0,0,0,,,,2013-12-11 15:00,2013-12-25 15:00,,2013-06-04 07:00,2013-06-17 17:00,2013-06-04 07:00,2013-06-17 17:00,2013-06-04 07:00,2013-06-17 17:00,,2013-12-11 15:00,2013-12-25 15:00,,PT_Normal,,,,,yH4iXFSgfEqfoOdNpOtbvw,75wixbqNLkGVyx4G6UCFjQ,,,N,0,0,,,2013-06-23 13:00,2013-06-23 13:00,admin,admin
612,85697,1346,11526,1473,1,0,N,N,N,CP_Phys,TT_Task,DT_FixedDrtn,RV_OK,TK_NotStart,B3300,MIR for Grout Admixture,,1328,1319,20,0,0,0,20,0,0,0,,,,2013-12-25 15:00,2013-12-29 15:00,,2013-06-18 07:00,2013-06-19 17:00,2013-06-18 07:00,2013-06-19 17:00,2013-06-18 07:00,2013-06-19 17:00,,2013-12-25 15:00,2013-12-29 15:00,,PT_Normal,,,,,7/0dheCoakS7Zhw9Rm7KuQ,rwtAkzNbSU6QtHkZPl06sA,,,N,0,0,,,2013-06-23 13:00,2013-06-23 13:00,admin,admin
613,85698,1346,11526,1473,1,0,N,N,N,CP_Phys,TT_Task,DT_FixedDrtn,RV_OK,TK_NotStart,B3310,MAR for Grout Admixture,,1328,0,220,0,0,0,220,0,0,0,,,,2013-11-09 15:00,2013-12-11 15:00,,2013-05-05 07:00,2013-06-03 17:00,2013-05-05 07:00,2013-06-03 17:00,2013-05-05 07:00,2013-06-03 17:00,,2013-11-09 15:00,2013-12-11 15:00,,PT_Normal,,,,,GW6GxgON5EW8VPA13mtsPw,QzbPjZ4+Akm0c9UlCw99qg,,,N,0,0,,,2013-06-23 13:00,2013-06-23 13:00,admin,admin
614,85699,1346,11526,1474,1,0,N,N,N,CP_Phys,TT_Task,DT_FixedDrtn,RV_OK,TK_NotStart,B3320,Procurment  for Grout Admixture,,1908,0,140,0,0,0,140,0,0,0,,,,2013-12-11 15:00,2013-12-25 15:00,,2013-06-04 07:00,2013-06-17 17:00,2013-06-04 07:00,2013-06-17 17:00,2013-06-04 07:00,2013-06-17 17:00,,2013-12-11 15:00,2013-12-25 15:00,,PT_Normal,,,,,2hlmE8XvYEG8cSmkzdqxaA,BrWrJnxTbkui2+W1g0/DVQ,,,N,0,0,,,2013-06-23 13:00,2013-06-23 13:00,admin,admin
615,85700,1346,11526,1473,1,0,N,N,N,CP_Phys,TT_Task,DT_FixedDrtn,RV_OK,TK_NotStart,B3330,MIR for HTS Wire for Pre-Stressing,,1328,1319,20,0,0,0,20,0,0,0,,,,2013-12-25 15:00,2013-12-29 15:00,,2013-06-18 07:00,2013-06-19 17:00,2013-06-18 07:00,2013-06-19 17:00,2013-06-18 07:00,2013-06-19 17:00,,2013-12-25 15:00,2013-12-29 15:00,,PT_Normal,,,,,V5evuPyu+0y1K+DalSY4qA,SvSDF5kUYkKBHUGS9n76GA,,,N,0,0,,,2013-06-23 13:00,2013-06-23 13:00,admin,admin
616,85701,1346,11526,1473,1,0,N,N,N,CP_Phys,TT_Task,DT_FixedDrtn,RV_OK,TK_NotStart,B3340,MAR for HTS Wire for Pre-Stressing,,1328,0,220,0,0,0,220,0,0,0,,,,2013-11-09 15:00,2013-12-11 15:00,,2013-05-05 07:00,2013-06-03 17:00,2013-05-05 07:00,2013-06-03 17:00,2013-05-05 07:00,2013-06-03 17:00,,2013-11-09 15:00,2013-12-11 15:00,,PT_Normal,,,,,CrN4c91LtkqloXjEvDm9eg,fHFOk68CdEqHR3Ely9gsew,,,N,0,0,,,2013-06-23 13:00,2013-06-23 13:00,admin,admin
617,85702,1346,11526,1474,1,0,N,N,N,CP_Phys,TT_Task,DT_FixedDrtn,RV_OK,TK_NotStart,B3350,Procurment  for HTS Wire for Pre-Stressing,,1908,0,140,0,0,0,140,0,0,0,,,,2013-12-11 15:00,2013-12-25 15:00,,2013-06-04 07:00,2013-06-17 17:00,2013-06-04 07:00,2013-06-17 17:00,2013-06-04 07:00,2013-06-17 17:00,,2013-12-11 15:00,2013-12-25 15:00,,PT_Normal,,,,,fj07OpmyFku8C9S+qWdJ4g,Ko29yr/K30OaaJpgSb+sOg,,,N,0,0,,,2013-06-23 13:00,2013-06-23 13:00,admin,admin
618,85703,1346,11526,1473,1,0,N,N,N,CP_Phys,TT_Task,DT_FixedDrtn,RV_OK,TK_NotStart,A12760,Asphalt Works,2984,9,0,20,0,250.666667,250.666667,20,82.666668,0,82.666668,,,,2013-12-25 15:00,2013-12-29 15:00,,2013-12-24 16:00,2013-12-28 16:00,2013-12-24 16:00,2013-12-28 16:00,2013-12-24 16:00,2013-12-28 16:00,,2013-12-25 15:00,2013-12-29 15:00,,PT_Normal,,,,,FVHvL/huPUyse9PYeHwySw,xXZXfCGvQGiHEFMcnXYUTQ,,,N,0,0,,,2013-06-23 13:00,2013-06-23 13:00,admin,admin
619,85704,1346,11526,1473,1,0,N,N,N,CP_Phys,TT_Task,DT_FixedDrtn,RV_OK,TK_NotStart,A8090,Road Marking & Signs,2969,49,40,50,0,141.666667,141.666667,50,50,0,50,,,,2014-01-04 15:00,2014-01-11 15:00,,2013-12-28 16:00,2014-01-04 16:00,2013-12-28 16:00,2014-01-04 16:00,2013-12-28 16:00,2014-01-04 16:00,,2014-01-04 15:00,2014-01-11 15:00,,PT_Normal,,,,,nFMNu1LkR06CXFWBOmV9RQ,Raf6cBNZRNqAcSOSCTlg8g,,,N,0,0,,,2013-06-23 13:00,2013-06-23 13:00,admin,admin
620,85705,1346,11526,1473,1,0,N,N,N,CP_Phys,TT_Task,DT_FixedDrtn,RV_OK,TK_NotStart,A12770,"Subgrade, Sub Base &  Aggregate Base Course",2984,9,0,20,0,240,240,20,94.814816,0,94.814816,,,,2013-12-23 15:00,2013-12-25 15:00,,2013-12-22 16:00,2013-12-24 16:00,2013-12-22 16:00,2013-12-24 16:00,2013-12-22 16:00,2013-12-24 16:00,,2013-12-23 15:00,2013-12-25 15:00,,PT_Normal,,,,,xEyJZn5UokeIC+hwqExGFg,klCdySQvS9qKh057PMdo7Q,,,N,0,0,,,2013-06-23 13:00,2013-06-23 13:00,admin,admin
621,85706,1346,11526,1473,1,0,N,N,N,CP_Phys,TT_Task,DT_FixedDrtn,RV_OK,TK_NotStart,A12780,Preparation & Submission of Bridge Load Testing Methodology,,988,0,40,0,0,0,40,0,0,0,,,,2013-12-03 15:00,2013-12-09 15:00,,2013-07-14 07:00,2013-07-17 17:00,2013-07-14 07:00,2013-07-17 17:00,2013-07-14 07:00,2013-07-17 17:00,,2013-12-03 15:00,2013-12-09 15:00,,PT_Normal,,,,,YdAvvfI7i0eoUrlrc+r7IQ,862sJYS7SCuR2etvEVsJDQ,,,N,0,0,,,2013-06-23 13:00,2013-06-23 13:00,admin,admin
622,85707,1346,11526,1473,1,0,N,N,N,CP_Phys,TT_Task,DT_FixedDrtn,RV_OK,TK_NotStart,A12790,Approval of Bridge Load Testing Methodology,,988,979,140,0,0,0,140,0,0,0,,,,2013-12-09 15:00,2013-12-29 15:00,,2013-07-20 07:00,2013-08-06 17:00,2013-07-20 07:00,2013-08-06 17:00,2013-07-20 07:00,2013-08-06 17:00,,2013-12-09 15:00,2013-12-29 15:00,,PT_Normal,,,,,lRwc0HH+DEu4lN5maOoQrQ,SNqFLuJbSb2nwdtHHOtNyQ,,,N,0,0,,,2013-06-23 13:00,2013-06-23 13:00,admin,admin
623,85708,1346,11526,1473,1,0,N,N,N,CP_Phys,TT_Task,DT_FixedDrtn,RV_OK,TK_NotStart,A12800,Conducting Bridge Load Test,,9,0,27,0,0,0,27,0,0,0,,,,2013-12-29 15:00,2014-01-01 12:00,,2013-12-28 16:00,2013-12-31 13:00,2013-12-28 16:00,2013-12-31 13:00,2013-12-28 16:00,2013-12-31 13:00,,2013-12-29 15:00,2014-01-01 12:00,,PT_Normal,,,,,ZZUFbPc8H0OQTd9Nj/znag,pdq+hqTARXG322+Owvcqow,,,N,0,0,,,2013-06-23 13:00,2013-06-23 13:00,admin,admin
624,85709,1346,11526,1473,1,0,N,N,N,CP_Phys,TT_Task,DT_FixedDrtn,RV_OK,TK_NotStart,A12810,Prepration and Submission of Bridge Load Test Results by Subcontractor,,9,0,63,0,0,0,63,0,0,0,,,,2014-01-01 12:00,2014-01-11 15:00,,2013-12-31 13:00,2014-01-08 16:00,2013-12-31 13:00,2014-01-08 16:00,2013-12-31 13:00,2014-01-08 16:00,,2014-01-01 12:00,2014-01-11 15:00,,PT_Normal,,,,,9Ec7vE+2UE+Bvo0K6Ue83A,08SzFtrJQYqfdP/3GXAqDA,,,N,0,0,,,2013-06-23 13:00,2013-06-23 13:00,admin,admin
625,85710,1346,11526,1473,0,0,N,N,N,CP_Phys,TT_FinMile,DT_FixedDrtn,RV_OK,TK_NotStart,A12820,Completion of Finishing Works for Bridge - West Bound,,9,9,0,0,0,0,0,0,0,0,,,,2014-01-11 15:00,2014-01-11 15:00,,2014-01-08 16:00,2014-01-08 16:00,2014-01-08 16:00,2014-01-08 16:00,2014-01-08 16:00,2014-01-08 16:00,,2014-01-11 15:00,2014-01-11 15:00,,PT_Normal,,,,,uy4pHVkfmkOtTAiviWXu0Q,0pdMq9tzQ6W/VY0nvT0XYw,,,N,0,0,,,2013-06-23 13:00,2013-06-23 13:00,admin,admin
626,85711,1346,11526,1473,1,0,N,N,N,CP_Phys,TT_Task,DT_FixedDrtn,RV_OK,TK_NotStart,A12830,Curb Painting,2969,49,40,50,0,500,500,50,50,0,50,,,,2014-01-04 15:00,2014-01-11 15:00,,2013-12-28 16:00,2014-01-04 16:00,2013-12-28 16:00,2014-01-04 16:00,2013-12-28 16:00,2014-01-04 16:00,,2014-01-04 15:00,2014-01-11 15:00,,PT_Normal,,,,,waFmDMMMAkKtYxyWp5fGFg,nZTXlvfLQpiYGRvU0Kk11A,,,N,0,0,,,2013-06-23 13:00,2013-06-23 13:00,admin,admin
627,85712,1346,11526,1473,1,100,N,N,N,CP_Phys,TT_Task,DT_FixedDrtn,RV_OK,TK_Complete,A49,MIR for Bridge Railing,,,,0,0,0,0,20,0,0,0,,2013-03-13 00:00,2013-03-17 00:00,2014-01-11 15:00,2014-01-11 15:00,,2013-04-23 00:00,2013-04-23 00:00,,,2013-04-27 07:00,2013-04-28 17:00,,,,,PT_Normal,,,,,K6kxK6gGFEOW4vT/OWMshA,RgU0xWa/g0ezVsXvLCqbnQ,,,N,0,0,,,2013-06-23 13:00,2013-06-23 13:00,admin,admin
628,85713,1346,11526,1473,1,100,N,N,N,CP_Phys,TT_Task,DT_FixedDrtn,RV_OK,TK_Complete,A24,MAR for Bridge Railing,,,,0,0,0,0,220,0,0,0,,2013-01-28 00:00,2013-03-11 00:00,2014-01-11 15:00,2014-01-11 15:00,,2013-04-23 00:00,2013-04-23 00:00,,,2013-04-23 07:00,2013-05-22 17:00,,,,,PT_Normal,,,,,Bhwc+BJkO0S5USVkWgtFIg,EO4FYD2di0eh0IcpUYDf9g,,,N,0,0,,,2013-06-23 13:00,2013-06-23 13:00,admin,admin
629,85714,1346,11526,1474,1,100,N,N,N,CP_Phys,TT_Task,DT_FixedDrtn,RV_OK,TK_Complete,A39,Procurment  for Bridge Railing,,,,0,0,0,0,80,0,0,0,,2013-03-12 00:00,2013-03-16 00:00,2014-01-11 15:00,2014-01-11 15:00,,2013-04-23 00:00,2013-04-23 00:00,,,2013-04-23 07:00,2013-04-30 17:00,,,,,PT_Normal,,,,,K2VFkupyH0W9aCxenTzAXg,8Ez2nbK98kG1eaT88nBx9w,,,N,0,0,,,2013-06-23 13:00,2013-06-23 13:00,admin,admin
630,85715,1346,11526,1473,1,0,N,N,N,CP_Phys,TT_Task,DT_FixedDrtn,RV_OK,TK_NotStart,B3361,MIR for Sliding Doors,,968,959,20,0,0,0,20,0,0,0,,,,2014-01-07 15:00,2014-01-11 15:00,,2013-08-24 07:00,2013-08-25 17:00,2013-08-24 07:00,2013-08-25 17:00,2013-08-24 07:00,2013-08-25 17:00,,2014-01-07 15:00,2014-01-11 15:00,,PT_Normal,,,,,6a+nDyk6g0i6kZ1EA6guEw,+Km+kINjQ2ip3yL89jIewA,,,N,0,0,,,2013-06-23 13:00,2013-06-23 13:00,admin,admin
631,85716,1346,11526,1473,1,0,N,N,N,CP_Phys,TT_Task,DT_FixedDrtn,RV_OK,TK_NotStart,B3401,MAR for Sliding Doors,,958,0,220,0,0,0,220,0,0,0,,,,2013-10-19 15:00,2013-11-18 15:00,,2013-06-04 07:00,2013-07-03 17:00,2013-06-04 07:00,2013-07-03 17:00,2013-06-04 07:00,2013-07-03 17:00,,2013-10-19 15:00,2013-11-18 15:00,,PT_Normal,,,,,NmE97JZKxU240rgOfgOfpA,0hD88TziQ4SPb/hEkSz/2Q,,,N,0,0,,,2013-06-23 13:00,2013-06-23 13:00,admin,admin
632,85717,1346,11526,1474,1,0,N,N,N,CP_Phys,TT_Task,DT_FixedDrtn,RV_OK,TK_NotStart,B3411,Procurment  for Sliding Doors,,1378,10,500,0,0,0,500,0,0,0,,,,2013-11-18 15:00,2014-01-07 15:00,,2013-07-04 07:00,2013-08-22 17:00,2013-07-04 07:00,2013-08-22 17:00,2013-07-04 07:00,2013-08-22 17:00,,2013-11-18 15:00,2014-01-07 15:00,,PT_Normal,,,,,bSDHkRz4SkevIkMR/a71mQ,wLguc9A8TXWtVuPztbKYSw,,,N,0,0,,,2013-06-23 13:00,2013-06-23 13:00,admin,admin
633,85718,1346,11526,1473,1,100,N,N,N,CP_Phys,TT_Task,DT_FixedDrtn,RV_OK,TK_Complete,A15118,Prepartion & Submission for Bridge Railing,,,,0,0,0,0,80,0,0,0,,2013-01-28 00:00,2013-03-11 00:00,2014-01-11 15:00,2014-01-11 15:00,,2013-04-23 00:00,2013-04-23 00:00,,,2013-04-23 07:00,2013-05-04 17:00,,,,,PT_Normal,,,,,anZjJWWht0GlUFtfg8Lp6w,f50R3zVn50aRSFnHGpu19g,,,N,0,0,,,2013-06-23 13:00,2013-06-23 13:00,admin,admin
634,85719,1346,11526,1473,1,80,N,N,N,CP_Phys,TT_Task,DT_FixedDrtn,RV_OK,TK_Active,B3402,Prepartion & Submission for Sliding Doors,,958,0,300,0,0,0,80,0,0,0,,2013-03-13 00:00,,2013-09-07 15:00,2013-10-19 15:00,,2013-04-23 07:00,2013-06-03 17:00,2013-04-23 07:00,2013-06-03 17:00,2013-02-19 16:00,2013-03-03 16:00,,2013-09-07 15:00,2013-10-19 15:00,,PT_Normal,,,,,Nh/vThwjs0SygfcTXoBe6A,dQKzLN+Smk6JqAxGvr0/6A,,,N,0,0,,,2013-06-23 13:00,2013-06-23 13:00,admin,admin
635,85720,1346,11526,1473,1,0,N,N,N,CP_Phys,TT_Task,DT_FixedDrtn,RV_OK,TK_NotStart,B1521,Prepartion & Submission for Curb Paint,,1408,0,80,0,0,0,80,0,0,0,,,,2013-11-09 15:00,2013-11-23 15:00,,2013-04-23 07:00,2013-05-04 17:00,2013-04-23 07:00,2013-05-04 17:00,2013-04-23 07:00,2013-05-04 17:00,,2013-11-09 15:00,2013-11-23 15:00,,PT_Normal,,,,,rUV6SpmchkasSbe12H/rhQ,tVzFY57SvUGqA406T534WA,,,N,0,0,,,2013-06-23 13:00,2013-06-23 13:00,admin,admin
636,85721,1346,11526,1473,1,0,N,N,N,CP_Phys,TT_Task,DT_FixedDrtn,RV_OK,TK_NotStart,B3251,Prepartion & Submission for End Anchorage,,1328,0,80,0,0,0,80,0,0,0,,,,2013-10-28 15:00,2013-11-09 15:00,,2013-04-23 07:00,2013-05-04 17:00,2013-04-23 07:00,2013-05-04 17:00,2013-04-23 07:00,2013-05-04 17:00,,2013-10-28 15:00,2013-11-09 15:00,,PT_Normal,,,,,rO3gVTm2QU6D6WaiOGjYsQ,WWNQ051UbUO8T6GZFnfD2Q,,,N,0,0,,,2013-06-23 13:00,2013-06-23 13:00,admin,admin
637,85722,1346,11526,1473,1,0,N,N,N,CP_Phys,TT_Task,DT_FixedDrtn,RV_OK,TK_NotStart,B3281,Prepartion & Submission for Trump Cone & Wedge,,1328,0,80,0,0,0,80,0,0,0,,,,2013-10-28 15:00,2013-11-09 15:00,,2013-04-23 07:00,2013-05-04 17:00,2013-04-23 07:00,2013-05-04 17:00,2013-04-23 07:00,2013-05-04 17:00,,2013-10-28 15:00,2013-11-09 15:00,,PT_Normal,,,,,g6qegTmrGU+kndHYyf/sfA,P/xpXrVUS06VgFtlJEl3XQ,,,N,0,0,,,2013-06-23 13:00,2013-06-23 13:00,admin,admin
638,85723,1346,11526,1473,1,0,N,N,N,CP_Phys,TT_Task,DT_FixedDrtn,RV_OK,TK_NotStart,B3311,Prepartion & Submission for Grout Admixture,,1328,0,80,0,0,0,80,0,0,0,,,,2013-10-28 15:00,2013-11-09 15:00,,2013-04-23 07:00,2013-05-04 17:00,2013-04-23 07:00,2013-05-04 17:00,2013-04-23 07:00,2013-05-04 17:00,,2013-10-28 15:00,2013-11-09 15:00,,PT_Normal,,,,,h7TCust6HEWpByRWS+7Fsg,f7ZHWu+3EEmwwpA/1L2/vA,,,N,0,0,,,2013-06-23 13:00,2013-06-23 13:00,admin,admin
639,85724,1346,11526,1473,1,0,N,N,N,CP_Phys,TT_Task,DT_FixedDrtn,RV_OK,TK_NotStart,B3341,Prepartion & Submission for HTS Wire for Pre-Stressing,,1328,0,80,0,0,0,80,0,0,0,,,,2013-10-28 15:00,2013-11-09 15:00,,2013-04-23 07:00,2013-05-04 17:00,2013-04-23 07:00,2013-05-04 17:00,2013-04-23 07:00,2013-05-04 17:00,,2013-10-28 15:00,2013-11-09 15:00,,PT_Normal,,,,,H9A9IBDlrE+ZRQRZ4iYh7A,rrqAaT25OUyebOw41KX5ag,,,N,0,0,,,2013-06-23 13:00,2013-06-23 13:00,admin,admin
640,85725,1346,11532,1473,1,0,N,N,N,CP_Phys,TT_Task,DT_FixedDrtn,RV_OK,TK_NotStart,A14980,Asphalt Works,2984,0,0,20,0,257,257,20,118,0,118,,,,2014-01-06 07:00,2014-01-07 17:00,,2014-01-06 07:00,2014-01-07 17:00,2014-01-06 07:00,2014-01-07 17:00,2014-01-06 07:00,2014-01-07 17:00,,2014-01-06 07:00,2014-01-07 17:00,,PT_Normal,,,,,g9pLBmIfFUqexTDKeDhyPw,LVRRYSyqR3qfvG8OrHfYHA,,,Y,0,0,,,2013-06-23 13:00,2013-06-23 13:00,admin,admin
641,85726,1346,11532,1473,1,0,N,N,N,CP_Phys,TT_Task,DT_FixedDrtn,RV_OK,TK_NotStart,A8270,Road Marking & Signs,2969,0,0,18,0,288,288,18,72,0,72,,,,2014-01-08 07:00,2014-01-11 15:00,,2014-01-08 07:00,2014-01-11 15:00,2014-01-08 07:00,2014-01-11 15:00,2014-01-08 07:00,2014-01-11 15:00,,2014-01-08 07:00,2014-01-11 15:00,,PT_Normal,,,,,zFV0S8TKcki+up6cOvPyIQ,eBN+DUriQO6goBVIavgpGQ,,,Y,0,0,,,2013-06-23 13:00,2013-06-23 13:00,admin,admin
642,85727,1346,11532,1473,1,0,N,N,N,CP_Phys,TT_Task,DT_FixedDrtn,RV_OK,TK_NotStart,A14990,"Subgrade, Sub Base &  Aggregate Base Course",2984,0,0,18,0,192,192,18,72,0,72,,,,2014-01-04 09:00,2014-01-05 17:00,,2014-01-04 09:00,2014-01-05 17:00,2014-01-04 09:00,2014-01-05 17:00,2014-01-04 09:00,2014-01-05 17:00,,2014-01-04 09:00,2014-01-05 17:00,,PT_Normal,,,,,3eT5Pu7hAEGbZyt2RyGc6w,nHbXOXHCRy6UlmGWlwyX8Q,,,Y,0,0,,,2013-06-23 13:00,2013-06-23 13:00,admin,admin
643,85728,1346,11532,1473,1,0,N,N,N,CP_Phys,TT_Task,DT_FixedDrtn,RV_OK,TK_NotStart,A15000,Installation of Street Lights,2980,9,9,200,0,3200,3200,200,800,0,800,,,,2013-12-14 15:00,2014-01-11 15:00,,2013-12-11 16:00,2014-01-08 16:00,2013-12-11 16:00,2014-01-08 16:00,2013-12-11 16:00,2014-01-08 16:00,,2013-12-14 15:00,2014-01-11 15:00,,PT_Normal,,,,,L6h3uw3nqk6ihC49Mf1IrQ,IMuGgqOcSI6FsLFp84sPWw,,,N,0,0,,,2013-06-23 13:00,2013-06-23 13:00,admin,admin
644,85729,1346,11532,1473,0,0,N,N,N,CP_Phys,TT_FinMile,DT_FixedDrtn,RV_OK,TK_NotStart,A15010,Completion of Finishing Works for Bridge - East Bound,,0,0,0,0,0,0,0,0,0,0,,,,2014-01-11 15:00,2014-01-11 15:00,,2014-01-11 15:00,2014-01-11 15:00,2014-01-11 15:00,2014-01-11 15:00,2014-01-11 15:00,2014-01-11 15:00,,2014-01-11 15:00,2014-01-11 15:00,,PT_Normal,,,,,xrXPRhaktUKO8iyJYa1RoA,8VeI1TDuQnCs2pf9J6X6qg,,,Y,0,0,,,2013-06-23 13:00,2013-06-23 13:00,admin,admin
645,85730,1346,11532,1473,1,0,N,N,N,CP_Phys,TT_Task,DT_FixedDrtn,RV_OK,TK_NotStart,A15020,Curb Painting,2969,0,0,18,0,180,180,18,18,0,18,,,,2014-01-08 07:00,2014-01-11 15:00,,2014-01-08 07:00,2014-01-11 15:00,2014-01-08 07:00,2014-01-11 15:00,2014-01-08 07:00,2014-01-11 15:00,,2014-01-08 07:00,2014-01-11 15:00,,PT_Normal,,,,,W7QNrrATzU6X8rQDNQ9TkA,IBI2AgENQ7aNAV7fUYwFCg,,,Y,0,0,,,2013-06-23 13:00,2013-06-23 13:00,admin,admin
646,85731,1346,11530,1473,1,80,N,N,N,CP_Phys,TT_Task,DT_FixedDrtn,RV_OK,TK_Active,OCEC4610,"Shopdrawings for Zones no. 11, 10 and 8",2978,1409,0,270,0,720.000001,160,60,0,0,0,,2012-12-25 13:00,,2013-11-09 16:00,2013-12-18 16:00,,2013-04-23 07:00,2013-05-29 17:00,2013-04-23 07:00,2013-05-29 17:00,2012-12-25 13:00,2013-01-02 13:00,,2013-11-09 16:00,2013-12-18 16:00,,PT_Normal,,,,,0UirOZ5sKEyzDo4BPWsB1g,t4uctJuiTkKbXA4vXutXhg,,,N,0,0,,,2013-06-23 13:00,2013-06-23 13:00,admin,admin
647,85732,1346,11530,1473,1,80,N,N,N,CP_Phys,TT_Task,DT_FixedDrtn,RV_OK,TK_Active,OCEC9680,"Shopdrawings for Zones no. 15, 14 and 13",2978,1469,0,270,0,720.000001,160,60,0,0,0,,2012-12-25 13:00,,2013-11-17 16:00,2013-12-28 16:00,,2013-04-23 07:00,2013-05-29 17:00,2013-04-23 07:00,2013-05-29 17:00,2012-12-25 13:00,2013-01-02 13:00,,2013-11-17 16:00,2013-12-28 16:00,,PT_Normal,,,,,7RlvWucag0qxmxJ9pyDviA,JNbq2iN+T7+9lpUkOgGY9w,,,N,0,0,,,2013-06-23 13:00,2013-06-23 13:00,admin,admin
648,85733,1346,11530,1473,1,80,N,N,N,CP_Phys,TT_Task,DT_FixedDrtn,RV_OK,TK_Active,OCEC9690,"Shopdrawings for Zones no. 7, 6 and 5",2978,169,0,270,0,720.000001,160,60,0,0,0,,2012-12-25 13:00,,2013-05-15 16:00,2013-06-23 16:00,,2013-04-23 07:00,2013-05-29 17:00,2013-04-23 07:00,2013-05-29 17:00,2012-12-25 13:00,2013-01-02 13:00,,2013-05-15 16:00,2013-06-23 16:00,,PT_Normal,,,,,k1a++pVdikuQKz34jRC4hA,tZwN6x0jSOCbUlxbWvbnhA,,,N,0,0,,,2013-06-23 13:00,2013-06-23 13:00,admin,admin
649,85734,1346,11530,1473,1,80,N,N,N,CP_Phys,TT_Task,DT_FixedDrtn,RV_OK,TK_Active,OCEC9700,"Shopdrawings for Zones no. 9, 4, 2 and 1",2978,1469,0,50,26.666667,133.333334,160,60,0,0,0,,2012-12-25 13:00,,2013-11-17 16:00,2013-11-26 16:00,,2013-04-23 07:00,2013-04-29 17:00,2013-04-23 07:00,2013-04-29 17:00,2012-12-25 13:00,2013-01-02 13:00,,2013-11-17 16:00,2013-11-26 16:00,,PT_Normal,,,,,g3He1syUbEayA6MQ/wa3OQ,x+C9RVxaR1unRuH/XoG9wA,,,N,26.666667,0,,,2013-06-23 13:00,2013-06-23 13:00,admin,admin
650,85735,1346,11531,1473,1,80,N,N,N,CP_Phys,TT_Task,DT_FixedDrtn,RV_OK,TK_Active,OCEC5840,"Engineering Review and approval Shopdrawings for Zones no. 11, 10 and 8",2978,1409,1409,200,0,240,168,140,0,0,0,,2013-02-02 00:00,,2013-12-18 16:00,2014-01-15 16:00,,2013-06-01 07:00,2013-06-26 17:00,2013-06-01 07:00,2013-06-26 17:00,2013-01-02 13:00,2013-01-22 13:00,,2013-12-18 16:00,2014-01-15 16:00,,PT_Normal,,,,,BrhtxHz01UG/r4si38zvJQ,JO9y1r5lQr+WxJ9WOmjvtw,,,N,0,0,,,2013-06-23 13:00,2013-06-23 13:00,admin,admin
651,85736,1346,11531,1473,1,80,N,N,N,CP_Phys,TT_Task,DT_FixedDrtn,RV_OK,TK_Active,OCEC9730,"Engineering Review and approval Shopdrawings for Zones no. 15, 14 and 13",2978,1469,1469,360,0,617.142856,240,140,0,0,0,,2013-02-02 00:00,,2013-11-26 16:00,2014-01-15 16:00,,2013-04-30 07:00,2013-06-18 17:00,2013-04-30 07:00,2013-06-18 17:00,2013-01-02 13:00,2013-01-22 13:00,,2013-11-26 16:00,2014-01-15 16:00,,PT_Normal,,,,,cgRv15UdwEmoeXpMetYgBA,yn5lRUvUTdOT+TLtgZR+NA,,,N,0,0,,,2013-06-23 13:00,2013-06-23 13:00,admin,admin
652,85737,1346,11531,1473,1,80,N,N,N,CP_Phys,TT_Task,DT_FixedDrtn,RV_OK,TK_Active,OCEC9740,"Engineering Review and approval Shopdrawings for Zones no. 7, 6 and 5",2978,1469,1469,140,0,240,240,140,0,0,0,,2013-02-02 00:00,,2013-12-28 16:00,2014-01-15 16:00,,2013-06-01 07:00,2013-06-18 17:00,2013-06-01 07:00,2013-06-18 17:00,2013-01-02 13:00,2013-01-22 13:00,,2013-12-28 16:00,2014-01-15 16:00,,PT_Normal,,,,,abztydQytUOiQL01SeYwLA,S2doTKoZQXyZk0lxBZ3+0w,,,N,0,0,,,2013-06-23 13:00,2013-06-23 13:00,admin,admin
653,85738,1346,11531,1473,1,80,N,N,N,CP_Phys,TT_Task,DT_FixedDrtn,RV_OK,TK_Active,OCEC9750,"Engineering Review and approval Shopdrawings for Zones no. 9, 4, 2 and 1",2978,169,0,140,0,240,240,140,0,0,0,,2013-02-02 00:00,,2013-06-23 16:00,2013-07-13 16:00,,2013-06-01 07:00,2013-06-18 17:00,2013-06-01 07:00,2013-06-18 17:00,2013-01-02 13:00,2013-01-22 13:00,,2013-06-23 16:00,2013-07-13 16:00,,PT_Normal,,,,,FZcn7eXr9Ei4qlD7J88baQ,G3ltNH5NTruMH+OFuRZRUg,,,N,0,0,,,2013-06-23 13:00,2013-06-23 13:00,admin,admin
654,85739,1346,11503,1473,1,100,N,N,N,CP_Phys,TT_Task,DT_FixedDrtn,RV_OK,TK_Complete,A9880,Prepare and Submit Method Statment for Hydrostatic Pressure Test (all Pipes),,,,0,0,0,0,250,0,0,0,,2013-02-10 00:00,2013-03-24 00:00,2013-12-28 16:00,2013-12-28 16:00,,2013-04-23 00:00,2013-04-23 00:00,,,2012-12-17 07:00,2013-01-20 17:00,,,,,PT_Normal,,,,,/1qSorJRb0uwC/8izzPHeg,rpfhdrpDpU2mIlmq9fKS7Q,,,N,0,0,,,2013-06-23 13:00,2013-06-23 13:00,admin,admin
655,85740,1346,11503,1473,1,80,N,N,N,CP_Phys,TT_Task,DT_FixedDrtn,RV_OK,TK_Active,A9890,Review and approval for Method Statment for Hydrostatic Pressure Test (all Pipes),,1739,1739,140,0,0,0,140,0,0,0,,2013-03-24 00:00,,2013-12-28 16:00,2014-01-15 16:00,,2013-04-23 07:00,2013-05-12 17:00,2013-04-23 07:00,2013-05-12 17:00,2013-01-21 07:00,2013-02-09 17:00,,2013-12-28 16:00,2014-01-15 16:00,,PT_Normal,,,,,hcI873rkeUeCoZ1TSw8B3g,K8CxKPaboU+4BqS+aw13Pw,,,N,0,0,,,2013-06-23 13:00,2013-06-23 13:00,admin,admin
656,85741,1346,11503,1473,1,100,N,N,N,CP_Phys,TT_Task,DT_FixedDrtn,RV_OK,TK_Complete,A9900,Prepare and Submit Method Statment for Desinfection of Pipelines,,,,0,0,0,0,250,0,0,0,,2013-02-10 00:00,2013-04-20 00:00,2013-12-28 16:00,2013-12-28 16:00,,2013-04-23 00:00,2013-04-23 00:00,,,2012-12-26 07:00,2013-01-29 17:00,,,,,PT_Normal,,,,,W8faLgP+Ykq8kkcP54KL1g,LKeXjMea/EGkZcPwO+p2Ug,,,N,0,0,,,2013-06-23 13:00,2013-06-23 13:00,admin,admin
657,85742,1346,11503,1473,1,50,N,N,N,CP_Phys,TT_Task,DT_FixedDrtn,RV_OK,TK_Active,A9910,Review and approval for Method Statment for Desinfection of Pipelines,,1739,1739,140,0,0,0,140,0,0,0,,2013-04-20 00:00,,2013-12-28 16:00,2014-01-15 16:00,,2013-04-23 07:00,2013-05-12 17:00,2013-04-23 07:00,2013-05-12 17:00,2013-01-30 07:00,2013-02-18 17:00,,2013-12-28 16:00,2014-01-15 16:00,,PT_Normal,,,,,27lzudAuZEWeMFGvOE6JCQ,8Q5Dw2TbJkO1MEH1TiVmPw,,,N,0,0,,,2013-06-23 13:00,2013-06-23 13:00,admin,admin
658,85942,1346,11558,1473,0,0,N,N,N,CP_Phys,TT_FinMile,DT_FixedDrtn,RV_OK,TK_NotStart,OCEC14200,Completion of Utilites Works,,79,79,0,0,0,0,0,0,0,0,,,,2014-01-15 16:00,2014-01-15 16:00,,2014-01-05 17:00,2014-01-05 17:00,2014-01-05 17:00,2014-01-05 17:00,2014-01-05 17:00,2014-01-05 17:00,,2014-01-15 16:00,2014-01-15 16:00,,PT_Normal,,,,,doos9Vu5j0WcLKEV2U8jFA,kKUL4FdoRMOZ2pUimuVdTw,,,N,0,0,,,2013-06-23 13:00,2013-06-23 13:00,admin,admin
659,85943,1346,11578,1473,1,0,N,N,N,CP_Phys,TT_Task,DT_FixedDrtn,RV_OK,TK_NotStart,OCEC4430,Final testing and Commissioning,2974,79,0,150,0,960,960,150,0,0,0,,,,2013-12-25 16:00,2014-01-15 16:00,,2013-12-16 07:00,2014-01-05 17:00,2013-12-16 07:00,2014-01-05 17:00,2013-12-16 07:00,2014-01-05 17:00,,2013-12-25 16:00,2014-01-15 16:00,,PT_Normal,,,,,r5Vhe9OO9k2jQPo0Jd5zhA,oaDACZtPRYGrd2Bh5EzHRg,,,N,0,0,,,2013-06-23 13:00,2013-06-23 13:00,admin,admin
660,86010,1346,11648,1473,1,0,N,N,N,CP_Phys,TT_Task,DT_FixedDrtn,RV_OK,TK_NotStart,OCEC14210,Completion of Balance Sewage System Works after the Un-Contractual Milestone Completion Date in 31st May 2013,,979,900,8,0,0,0,8,0,0,0,,,,2014-01-15 08:00,2014-01-15 16:00,,2013-08-28 09:00,2013-08-28 17:00,2013-08-28 09:00,2013-08-28 17:00,2013-08-28 09:00,2013-08-28 17:00,,2014-01-15 08:00,2014-01-15 16:00,,PT_Normal,,,,,53lW4l7CcEKrZ1J8yBLKfQ,fQWAnaZYQwuhbcZJ/Vurug,,,N,0,0,,,2013-06-23 13:00,2013-06-23 13:00,admin,admin
661,86011,1346,11648,1473,1,0,N,N,N,CP_Phys,TT_Task,DT_FixedDrtn,RV_OK,TK_NotStart,OCEC14220,Completion of Balance Chilled Water System Works after the Un-Contractual Milestone Completion Date in 31st May 2013,,979,900,8,0,0,0,8,0,0,0,,,,2014-01-15 08:00,2014-01-15 16:00,,2013-08-28 09:00,2013-08-28 17:00,2013-08-28 09:00,2013-08-28 17:00,2013-08-28 09:00,2013-08-28 17:00,,2014-01-15 08:00,2014-01-15 16:00,,PT_Normal,,,,,tghnnBay7EK6gsilUW+j3Q,WB7xEDWWS9WLaGuHLi3pnQ,,,N,0,0,,,2013-06-23 13:00,2013-06-23 13:00,admin,admin
662,86012,1346,11648,1473,1,0,N,N,N,CP_Phys,TT_Task,DT_FixedDrtn,RV_OK,TK_NotStart,OCEC14230,Completion of Balance Potable Water&Fire Water Works after the Un-Contractual Milestone Completion Date in 31st May 2013,,979,900,8,0,0,0,8,0,0,0,,,,2014-01-15 08:00,2014-01-15 16:00,,2013-08-28 09:00,2013-08-28 17:00,2013-08-28 09:00,2013-08-28 17:00,2013-08-28 09:00,2013-08-28 17:00,,2014-01-15 08:00,2014-01-15 16:00,,PT_Normal,,,,,xyyif871g0GqLPh/1Lm/6w,cI0SX1anTOSx04kVMkJjQg,,,N,0,0,,,2013-06-23 13:00,2013-06-23 13:00,admin,admin
663,86013,1346,11648,1473,1,0,N,N,N,CP_Phys,TT_Task,DT_FixedDrtn,RV_OK,TK_NotStart,OCEC14240,Completion of Balance Irrigation System Works after the Un-Contractual Milestone Completion Date in 31st May 2013,,979,900,8,0,0,0,8,0,0,0,,,,2014-01-15 08:00,2014-01-15 16:00,,2013-08-28 09:00,2013-08-28 17:00,2013-08-28 09:00,2013-08-28 17:00,2013-08-28 09:00,2013-08-28 17:00,,2014-01-15 08:00,2014-01-15 16:00,,PT_Normal,,,,,nzA4S0q2XkSWbB6ZOzzCRA,xZB8Nyw/ThO65q9It0pdeg,,,N,0,0,,,2013-06-23 13:00,2013-06-23 13:00,admin,admin
664,86377,1346,11662,1473,1,0,N,N,N,CP_Phys,TT_Task,DT_FixedDrtn,RV_OK,TK_NotStart,OCEC16290,Setting out and route survey,2971,1093,0,30,0,60,60,30,30,0,30,,,,2013-11-25 10:00,2013-11-30 10:00,,2013-06-19 07:00,2013-06-23 17:00,2013-06-19 07:00,2013-06-23 17:00,2013-06-19 07:00,2013-06-23 17:00,,2013-11-25 10:00,2013-11-30 10:00,,PT_Normal,,,,,NRznq9kxdkKMx0UDNqMXVA,j/jH+pRwCEKqRhvBGac32Q,,,N,0,0,,,2013-06-23 13:01,2013-06-23 13:01,admin,admin
665,86378,1346,11662,1473,1,0,N,N,N,CP_Phys,TT_Task,DT_FixedDrtn,RV_OK,TK_NotStart,OCEC16300,"Trench excavation, 262 m",2971,1093,0,80,0,480,480,80,160,0,160,,,,2013-11-30 10:00,2013-12-10 10:00,,2013-06-24 07:00,2013-07-03 17:00,2013-06-24 07:00,2013-07-03 17:00,2013-06-24 07:00,2013-07-03 17:00,,2013-11-30 10:00,2013-12-10 10:00,,PT_Normal,,,,,X0UWoR0A2EiTOhDe/O79wg,mRFgIJznM0u4iD5gcX7pZw,,,N,0,0,,,2013-06-23 13:01,2013-06-23 13:01,admin,admin
666,86379,1346,11662,1473,1,0,N,N,N,CP_Phys,TT_Task,DT_FixedDrtn,RV_OK,TK_NotStart,OCEC16310,Bedding and leveling,2971,1093,0,30,0,180,180,30,30,0,30,,,,2013-12-10 10:00,2013-12-15 10:00,,2013-07-06 07:00,2013-07-08 17:00,2013-07-06 07:00,2013-07-08 17:00,2013-07-06 07:00,2013-07-08 17:00,,2013-12-10 10:00,2013-12-15 10:00,,PT_Normal,,,,,HxF5B1La5E+h5FbUkDlelg,N9Uza2gNBEW+jpJPhytlYQ,,,N,0,0,,,2013-06-23 13:01,2013-06-23 13:01,admin,admin
667,86380,1346,11662,1473,1,0,N,N,N,CP_Phys,TT_Task,DT_FixedDrtn,RV_OK,TK_NotStart,OCEC16320,"Pipe lowering, 262 m",2994,1093,0,40,0,560,560,40,80,0,80,,,,2013-12-15 10:00,2013-12-21 10:00,,2013-07-09 07:00,2013-07-14 17:00,2013-07-09 07:00,2013-07-14 17:00,2013-07-09 07:00,2013-07-14 17:00,,2013-12-15 10:00,2013-12-21 10:00,,PT_Normal,,,,,i9KrWzNkYUChwMSQSsF+Og,pV3Beb+Y8UWiDblfRkkkIQ,,,N,0,0,,,2013-06-23 13:01,2013-06-23 13:01,admin,admin
668,86381,1346,11662,1473,1,0,N,N,N,CP_Phys,TT_Task,DT_FixedDrtn,RV_OK,TK_NotStart,OCEC16730,Pipe joining,2971,1093,0,40,0,440,440,40,40,0,40,,,,2013-12-21 10:00,2013-12-25 10:00,,2013-07-15 07:00,2013-07-20 17:00,2013-07-15 07:00,2013-07-20 17:00,2013-07-15 07:00,2013-07-20 17:00,,2013-12-21 10:00,2013-12-25 10:00,,PT_Normal,,,,,PelB944+XEGCX0vhjMPXrg,vp2I0rnuZUqn+ddtMifQwQ,,,N,0,0,,,2013-06-23 13:01,2013-06-23 13:01,admin,admin
669,86382,1346,11662,1473,1,0,N,N,N,CP_Phys,TT_Task,DT_FixedDrtn,RV_OK,TK_NotStart,OCEC16740,Pipe surrounding,2971,1113,20,40,0,440,440,40,0,0,0,,,,2013-12-30 10:00,2014-01-05 10:00,,2013-07-22 07:00,2013-07-27 17:00,2013-07-22 07:00,2013-07-27 17:00,2013-07-22 07:00,2013-07-27 17:00,,2013-12-30 10:00,2014-01-05 10:00,,PT_Normal,,,,,t+ike+OljkC4EFudJuKEwQ,qYfTUnkLq0COY2pVnHy+Ag,,,N,0,0,,,2013-06-23 13:01,2013-06-23 13:01,admin,admin
670,86383,1346,11662,1473,1,0,N,N,N,CP_Phys,TT_Task,DT_FixedDrtn,RV_OK,TK_NotStart,OCEC17960,Pressure testing,2969,1093,0,30,0,90,90,30,0,0,0,,,,2014-01-05 10:00,2014-01-08 10:00,,2013-07-30 07:00,2013-08-03 17:00,2013-07-30 07:00,2013-08-03 17:00,2013-07-30 07:00,2013-08-03 17:00,,2014-01-05 10:00,2014-01-08 10:00,,PT_Normal,,,,,pCUMZj0hcUWgDlgwQBypJQ,d9b1ktbKOk23ML/ezHWrlQ,,,N,0,0,,,2013-06-23 13:01,2013-06-23 13:01,admin,admin
671,86384,1346,11662,1473,1,0,N,N,N,CP_Phys,TT_Task,DT_FixedDrtn,RV_OK,TK_NotStart,OCEC17970,Backfilling & Compaction,2984,1093,0,30,0,210,210,30,90,0,90,,,,2014-01-08 10:00,2014-01-13 10:00,,2013-08-04 07:00,2013-08-06 17:00,2013-08-04 07:00,2013-08-06 17:00,2013-08-04 07:00,2013-08-06 17:00,,2014-01-08 10:00,2014-01-13 10:00,,PT_Normal,,,,,SJY1bCHuVU2SRmGtrYhenw,aTaO/Wen1k+FFAOtnoIEQQ,,,N,0,0,,,2013-06-23 13:01,2013-06-23 13:01,admin,admin
672,86385,1346,11662,1473,1,0,N,N,N,CP_Phys,TT_Task,DT_FixedDrtn,RV_OK,TK_NotStart,OCEC17980,"Marker post and Marker Plates Fixing, (no.=8)",2971,1093,0,16,0,76,76,16,20,0,20,,,,2014-01-13 10:00,2014-01-14 16:00,,2013-08-07 07:00,2013-08-12 13:00,2013-08-07 07:00,2013-08-12 13:00,2013-08-07 07:00,2013-08-12 13:00,,2014-01-13 10:00,2014-01-14 16:00,,PT_Normal,,,,,kL3O7EwXYESUzDENFPjwrg,6jfJC3ZAIEOwy2gtwVCM/w,,,N,0,0,,,2013-06-23 13:01,2013-06-23 13:01,admin,admin
673,86386,1346,11662,1473,1,0,N,N,N,CP_Phys,TT_Task,DT_FixedDrtn,RV_OK,TK_NotStart,OCEC17990,Inspection,2969,1093,114,8,0,16,16,8,0,0,0,,,,2014-01-15 08:00,2014-01-15 16:00,,2013-08-12 15:00,2013-08-13 13:00,2013-08-12 15:00,2013-08-13 13:00,2013-08-12 15:00,2013-08-13 13:00,,2014-01-15 08:00,2014-01-15 16:00,,PT_Normal,,,,,OsnmqUX1SkOk8nOz/ttk7g,FZKfoM2XxE2WvAGXK+HL0Q,,,N,0,0,,,2013-06-23 13:01,2013-06-23 13:01,admin,admin
674,86387,1346,11662,1473,1,0,N,N,N,CP_Phys,TT_Task,DT_FixedDrtn,RV_OK,TK_NotStart,OCEC18000,Construction of Chambers and Hook-up,2981,1093,0,60,0,300,300,60,0,0,0,,,,2013-12-25 10:00,2014-01-04 10:00,,2013-07-21 07:00,2013-07-28 17:00,2013-07-21 07:00,2013-07-28 17:00,2013-07-21 07:00,2013-07-28 17:00,,2013-12-25 10:00,2014-01-04 10:00,,PT_Normal,,,,,VniUc1Fj/kWSWqvCLN8qsQ,KiRuPkwYzUanABtceN9csA,,,N,0,0,,,2013-06-23 13:01,2013-06-23 13:01,admin,admin
675,86388,1346,11662,1473,1,0,N,N,N,CP_Phys,TT_Task,DT_FixedDrtn,RV_OK,TK_NotStart,OCEC13726,Inspection,,1093,0,10,0,0,0,10,0,0,0,,,,2013-12-09 10:00,2013-12-10 10:00,,2013-07-03 07:00,2013-07-03 17:00,2013-07-03 07:00,2013-07-03 17:00,2013-07-03 07:00,2013-07-03 17:00,,2013-12-09 10:00,2013-12-10 10:00,,PT_Normal,,,,,QwgFDr/wXEqNddpbf8B/cA,3KnGizK9JkCIqLfGz3lfew,,,N,0,0,,,2013-06-23 13:01,2013-06-23 13:01,admin,admin
676,86389,1346,11662,1473,1,0,N,N,N,CP_Phys,TT_Task,DT_FixedDrtn,RV_OK,TK_NotStart,OCEC13727,Inspection,,1093,0,10,0,0,0,10,0,0,0,,,,2013-12-14 10:00,2013-12-15 10:00,,2013-07-08 07:00,2013-07-08 17:00,2013-07-08 07:00,2013-07-08 17:00,2013-07-08 07:00,2013-07-08 17:00,,2013-12-14 10:00,2013-12-15 10:00,,PT_Normal,,,,,J/QMcJi59Ueg0ZloNB/rPw,bR4lhI21G0+bTVVhE7VmIQ,,,N,0,0,,,2013-06-23 13:01,2013-06-23 13:01,admin,admin
677,86390,1346,11662,1473,1,0,N,N,N,CP_Phys,TT_Task,DT_FixedDrtn,RV_OK,TK_NotStart,OCEC13728,Inspection,,1113,0,10,0,0,0,10,0,0,0,,,,2013-12-29 10:00,2013-12-30 10:00,,2013-07-21 07:00,2013-07-21 17:00,2013-07-21 07:00,2013-07-21 17:00,2013-07-21 07:00,2013-07-21 17:00,,2013-12-29 10:00,2013-12-30 10:00,,PT_Normal,,,,,reDlCTaq3kO+So6x2InLIg,I1tWX9CceUmelCeeSYJTNw,,,N,0,0,,,2013-06-23 13:01,2013-06-23 13:01,admin,admin
678,86391,1346,11662,1473,1,0,N,N,N,CP_Phys,TT_Task,DT_FixedDrtn,RV_OK,TK_NotStart,OCEC13729,Inspection,,1093,0,10,0,0,0,10,0,0,0,,,,2014-01-04 10:00,2014-01-05 10:00,,2013-07-29 07:00,2013-07-29 17:00,2013-07-29 07:00,2013-07-29 17:00,2013-07-29 07:00,2013-07-29 17:00,,2014-01-04 10:00,2014-01-05 10:00,,PT_Normal,,,,,iqqXcDNwZU6FHEuI5rdjeQ,elentzYp30yy1BbZOFVY5w,,,N,0,0,,,2013-06-23 13:01,2013-06-23 13:01,admin,admin
679,86392,1346,11662,1473,1,0,N,N,N,CP_Phys,TT_Task,DT_FixedDrtn,RV_OK,TK_NotStart,OCEC15035,HSE Requirments,2971,1093,0,24,0,40,40,24,0,0,0,,,,2013-11-25 16:00,2013-11-30 10:00,,2013-06-19 13:00,2013-06-23 17:00,2013-06-19 13:00,2013-06-23 17:00,2013-06-19 13:00,2013-06-23 17:00,,2013-11-25 16:00,2013-11-30 10:00,,PT_Normal,,,,,zhBD70FACESspTgpPXRChg,ucrHp6som0SRp4swec00Vw,,,N,0,0,,,2013-06-23 13:01,2013-06-23 13:01,admin,admin
680,86393,1346,11665,1473,1,0,N,N,N,CP_Phys,TT_Task,DT_FixedDrtn,RV_OK,TK_NotStart,OCEC17330,Setting out and route survey,2983,1093,0,30,0,60,60,30,30,0,30,,,,2013-11-25 10:00,2013-11-30 10:00,,2013-06-19 07:00,2013-06-23 17:00,2013-06-19 07:00,2013-06-23 17:00,2013-06-19 07:00,2013-06-23 17:00,,2013-11-25 10:00,2013-11-30 10:00,,PT_Normal,,,,,ySAoNt+5NUaKKHzml+nAxg,G+0P/Ypz2EKflADhtiEePQ,,,N,0,0,,,2013-06-23 13:01,2013-06-23 13:01,admin,admin
681,86394,1346,11665,1473,1,0,N,N,N,CP_Phys,TT_Task,DT_FixedDrtn,RV_OK,TK_NotStart,OCEC17340,"Trench excavation, 262 m",2971,1093,0,80,0,480,480,80,160,0,160,,,,2013-11-30 10:00,2013-12-10 10:00,,2013-06-24 07:00,2013-07-03 17:00,2013-06-24 07:00,2013-07-03 17:00,2013-06-24 07:00,2013-07-03 17:00,,2013-11-30 10:00,2013-12-10 10:00,,PT_Normal,,,,,G3+Br9XCR0SNPOHtFCA6CA,3TREKiXqc0mSA99ARJtjvg,,,N,0,0,,,2013-06-23 13:01,2013-06-23 13:01,admin,admin
682,86395,1346,11665,1473,1,0,N,N,N,CP_Phys,TT_Task,DT_FixedDrtn,RV_OK,TK_NotStart,OCEC17350,Bedding and leveling,2971,1093,0,40,0,240,240,40,40,0,40,,,,2013-12-10 10:00,2013-12-16 10:00,,2013-07-06 07:00,2013-07-09 17:00,2013-07-06 07:00,2013-07-09 17:00,2013-07-06 07:00,2013-07-09 17:00,,2013-12-10 10:00,2013-12-16 10:00,,PT_Normal,,,,,xsydZicr+UqdJsAng+tqoA,WLuwHbIO30qUuha1ubb3WQ,,,N,0,0,,,2013-06-23 13:01,2013-06-23 13:01,admin,admin
683,86396,1346,11665,1473,1,0,N,N,N,CP_Phys,TT_Task,DT_FixedDrtn,RV_OK,TK_NotStart,OCEC17360,"Pipe lowering, 262 m",2994,1093,0,50,0,700,700,50,50,0,50,,,,2013-12-16 10:00,2013-12-23 10:00,,2013-07-10 07:00,2013-07-16 17:00,2013-07-10 07:00,2013-07-16 17:00,2013-07-10 07:00,2013-07-16 17:00,,2013-12-16 10:00,2013-12-23 10:00,,PT_Normal,,,,,KBjAQX5R00+oFCRu7QCcCw,6rsXwYPrpk2Vkr/RzryA8g,,,N,0,0,,,2013-06-23 13:01,2013-06-23 13:01,admin,admin
684,86397,1346,11665,1473,1,0,N,N,N,CP_Phys,TT_Task,DT_FixedDrtn,RV_OK,TK_NotStart,OCEC17370,Pipe joining & Alignment,2971,1093,0,50,0,550,550,50,50,0,50,,,,2013-12-23 10:00,2013-12-30 10:00,,2013-07-17 07:00,2013-07-23 17:00,2013-07-17 07:00,2013-07-23 17:00,2013-07-17 07:00,2013-07-23 17:00,,2013-12-23 10:00,2013-12-30 10:00,,PT_Normal,,,,,k15gCO+DqUm5CHDqd4XvVw,9ynodVzDqEG6cAGbLl/SNg,,,N,0,0,,,2013-06-23 13:01,2013-06-23 13:01,admin,admin
685,86398,1346,11665,1473,1,0,N,N,N,CP_Phys,TT_Task,DT_FixedDrtn,RV_OK,TK_NotStart,OCEC17380,Pipe surrounding,2971,1093,0,50,0,500,500,50,0,0,0,,,,2013-12-30 10:00,2014-01-06 10:00,,2013-07-24 07:00,2013-07-30 17:00,2013-07-24 07:00,2013-07-30 17:00,2013-07-24 07:00,2013-07-30 17:00,,2013-12-30 10:00,2014-01-06 10:00,,PT_Normal,,,,,90ID8lyWz0iRer37nPep/Q,7g3yG4J2HESlchdUDtY2GQ,,,N,0,0,,,2013-06-23 13:01,2013-06-23 13:01,admin,admin
686,86399,1346,11665,1473,1,0,N,N,N,CP_Phys,TT_Task,DT_FixedDrtn,RV_OK,TK_NotStart,OCEC17390,System testing,2971,1093,0,30,0,90,90,30,0,0,0,,,,2014-01-06 10:00,2014-01-11 10:00,,2013-07-31 07:00,2013-08-04 17:00,2013-07-31 07:00,2013-08-04 17:00,2013-07-31 07:00,2013-08-04 17:00,,2014-01-06 10:00,2014-01-11 10:00,,PT_Normal,,,,,dlkmr8zzfECv/Tbt0DZnlg,pMHVslK5u0qMxuRfjs5S3Q,,,N,0,0,,,2013-06-23 13:01,2013-06-23 13:01,admin,admin
687,86400,1346,11665,1473,1,0,N,N,N,CP_Phys,TT_Task,DT_FixedDrtn,RV_OK,TK_NotStart,OCEC17400,Backfilling & Compaction,2971,1093,0,30,0,240,240,30,90,0,90,,,,2014-01-12 16:00,2014-01-15 16:00,,2013-08-06 13:00,2013-08-13 13:00,2013-08-06 13:00,2013-08-13 13:00,2013-08-06 13:00,2013-08-13 13:00,,2014-01-12 16:00,2014-01-15 16:00,,PT_Normal,,,,,Rfx0CE+s40eJGSn0osoGiQ,kfLO+bV4KECdNIWQ2ndpjA,,,N,0,0,,,2013-06-23 13:01,2013-06-23 13:01,admin,admin
688,86401,1346,11665,1473,1,0,N,N,N,CP_Phys,TT_Task,DT_FixedDrtn,RV_OK,TK_NotStart,OCEC17410,"Construction of manholes and hook up, (no.=4)",2981,1103,10,70,0,630,630,70,0,0,0,,,,2013-12-31 10:00,2014-01-11 10:00,,2013-07-24 07:00,2013-08-03 17:00,2013-07-24 07:00,2013-08-03 17:00,2013-07-24 07:00,2013-08-03 17:00,,2013-12-31 10:00,2014-01-11 10:00,,PT_Normal,,,,,Frg8C9l2ckCRbsopEhg6Mw,uTHXim80sEiKXsVu/m7Uxg,,,N,0,0,,,2013-06-23 13:01,2013-06-23 13:01,admin,admin
689,86402,1346,11665,1473,1,0,N,N,N,CP_Phys,TT_Task,DT_FixedDrtn,RV_OK,TK_NotStart,OCEC17420,"Marker post and Marker Plates Fixing, (no.=13)",2971,1093,0,16,0,72,72,16,16,0,16,,,,2014-01-11 10:00,2014-01-12 16:00,,2013-08-05 07:00,2013-08-06 13:00,2013-08-05 07:00,2013-08-06 13:00,2013-08-05 07:00,2013-08-06 13:00,,2014-01-11 10:00,2014-01-12 16:00,,PT_Normal,,,,,vcZE+Qf4y0iF1CGimkpx3Q,JhaHZ3YLKUiEj4PfCCq4Jw,,,N,0,0,,,2013-06-23 13:01,2013-06-23 13:01,admin,admin
690,86403,1346,11665,1473,1,0,N,N,N,CP_Phys,TT_Task,DT_FixedDrtn,RV_OK,TK_NotStart,OCEC17430,Inspection,2971,1093,114,8,0,16,16,8,0,0,0,,,,2014-01-15 08:00,2014-01-15 16:00,,2013-08-12 15:00,2013-08-13 13:00,2013-08-12 15:00,2013-08-13 13:00,2013-08-12 15:00,2013-08-13 13:00,,2014-01-15 08:00,2014-01-15 16:00,,PT_Normal,,,,,X1sH/uh9C0Cf7iMzrcil9w,qm6AnJNrQEeuJbZdsE/y0A,,,N,0,0,,,2013-06-23 13:01,2013-06-23 13:01,admin,admin
691,86404,1346,11665,1473,1,0,N,N,N,CP_Phys,TT_Task,DT_FixedDrtn,RV_OK,TK_NotStart,OCEC13674,Inspection,,1093,0,10,0,0,0,10,0,0,0,,,,2013-12-09 10:00,2013-12-10 10:00,,2013-07-03 07:00,2013-07-03 17:00,2013-07-03 07:00,2013-07-03 17:00,2013-07-03 07:00,2013-07-03 17:00,,2013-12-09 10:00,2013-12-10 10:00,,PT_Normal,,,,,bTFQ0uWNRUuvvi9i75a7iw,q132hYOIskiUEyd/IYDuGg,,,N,0,0,,,2013-06-23 13:01,2013-06-23 13:01,admin,admin
692,86405,1346,11665,1473,1,0,N,N,N,CP_Phys,TT_Task,DT_FixedDrtn,RV_OK,TK_NotStart,OCEC13675,Inspection,,1093,0,10,0,0,0,10,0,0,0,,,,2013-12-15 10:00,2013-12-16 10:00,,2013-07-09 07:00,2013-07-09 17:00,2013-07-09 07:00,2013-07-09 17:00,2013-07-09 07:00,2013-07-09 17:00,,2013-12-15 10:00,2013-12-16 10:00,,PT_Normal,,,,,wIz4mQFF7E6CJXoJOjhVQg,1TaU0ZDntkmwP+fQh9ab8w,,,N,0,0,,,2013-06-23 13:01,2013-06-23 13:01,admin,admin
693,86406,1346,11665,1473,1,0,N,N,N,CP_Phys,TT_Task,DT_FixedDrtn,RV_OK,TK_NotStart,OCEC13676,Inspection,,1103,0,10,0,0,0,10,0,0,0,,,,2013-12-30 10:00,2013-12-31 10:00,,2013-07-23 07:00,2013-07-23 17:00,2013-07-23 07:00,2013-07-23 17:00,2013-07-23 07:00,2013-07-23 17:00,,2013-12-30 10:00,2013-12-31 10:00,,PT_Normal,,,,,hn8HQ7RWvE+R5iykEx6hWw,jirVdxT0vUKxic72rwvQmw,,,N,0,0,,,2013-06-23 13:01,2013-06-23 13:01,admin,admin
694,86407,1346,11665,1473,1,0,N,N,N,CP_Phys,TT_Task,DT_FixedDrtn,RV_OK,TK_NotStart,OCEC13781,HSE Requirments,2971,1093,0,20,0,40,40,20,0,0,0,,,,2013-11-26 10:00,2013-11-30 10:00,,2013-06-22 07:00,2013-06-23 17:00,2013-06-22 07:00,2013-06-23 17:00,2013-06-22 07:00,2013-06-23 17:00,,2013-11-26 10:00,2013-11-30 10:00,,PT_Normal,,,,,i8JVpfI6bkCFQcepv7QA5Q,uj3Vt3MUCkWxOZV9y53CxQ,,,N,0,0,,,2013-06-23 13:01,2013-06-23 13:01,admin,admin
695,86408,1346,11681,1473,1,0,N,N,N,CP_Phys,TT_Task,DT_FixedDrtn,RV_OK,TK_NotStart,OCEC19730,Setting out and route survey,2983,1093,0,24,0,40,40,24,20,0,20,,,,2013-11-25 10:00,2013-11-27 14:00,,2013-06-19 07:00,2013-06-23 11:00,2013-06-19 07:00,2013-06-23 11:00,2013-06-19 07:00,2013-06-23 11:00,,2013-11-25 10:00,2013-11-27 14:00,,PT_Normal,,,,,HmjNkyzcIUG0se8aLmwN/Q,j8zBCIcOTIanrAvzhCVsaA,,,N,0,0,,,2013-06-23 13:01,2013-06-23 13:01,admin,admin
696,86409,1346,11681,1473,1,0,N,N,N,CP_Phys,TT_Task,DT_FixedDrtn,RV_OK,TK_NotStart,OCEC19740,"Trench excavation, 245 m",2971,1101,0,80,0,480,480,80,160,0,160,,,,2013-11-30 12:00,2013-12-10 12:00,,2013-06-23 11:00,2013-07-03 11:00,2013-06-23 11:00,2013-07-03 11:00,2013-06-23 11:00,2013-07-03 11:00,,2013-11-30 12:00,2013-12-10 12:00,,PT_Normal,,,,,X4MrTR8RnkKQFgWUyJVaaQ,oeIW7rhsTgCUkIKjYwk3/w,,,N,0,0,,,2013-06-23 13:01,2013-06-23 13:01,admin,admin
697,86410,1346,11681,1473,1,0,N,N,N,CP_Phys,TT_Task,DT_FixedDrtn,RV_OK,TK_NotStart,OCEC19750,Bedding and leveling,2971,1101,0,30,0,230,230,30,30,0,30,,,,2013-12-10 12:00,2013-12-15 12:00,,2013-07-03 11:00,2013-07-08 11:00,2013-07-03 11:00,2013-07-08 11:00,2013-07-03 11:00,2013-07-08 11:00,,2013-12-10 12:00,2013-12-15 12:00,,PT_Normal,,,,,9vl2NWeIo02Wd4/0g3n/UA,YwBOXZcMT1++iKj9JkdN3g,,,N,0,0,,,2013-06-23 13:01,2013-06-23 13:01,admin,admin
698,86411,1346,11681,1473,1,0,N,N,N,CP_Phys,TT_Task,DT_FixedDrtn,RV_OK,TK_NotStart,OCEC19760,"Pipe lowering, 245 m",2994,1101,0,30,0,525,525,30,30,0,30,,,,2013-12-15 12:00,2013-12-18 12:00,,2013-07-08 11:00,2013-07-13 11:00,2013-07-08 11:00,2013-07-13 11:00,2013-07-08 11:00,2013-07-13 11:00,,2013-12-15 12:00,2013-12-18 12:00,,PT_Normal,,,,,/pfjRQ7Wkk2i9IU7Xc68FA,BgQAPOghRY6PA0dVsDB4oQ,,,N,0,0,,,2013-06-23 13:01,2013-06-23 13:01,admin,admin
699,86412,1346,11681,1473,1,0,N,N,N,CP_Phys,TT_Task,DT_FixedDrtn,RV_OK,TK_NotStart,OCEC19770,Pipe joining,,1101,0,30,0,420,420,30,30,0,30,,,,2013-12-18 12:00,2013-12-23 12:00,,2013-07-13 11:00,2013-07-16 11:00,2013-07-13 11:00,2013-07-16 11:00,2013-07-13 11:00,2013-07-16 11:00,,2013-12-18 12:00,2013-12-23 12:00,,PT_Normal,,,,,OW9S+T3x3UC1F/1XHyea2Q,+nv9IGE7TEKkRqxnx4/K1Q,,,N,0,0,,,2013-06-23 13:01,2013-06-23 13:01,admin,admin
700,86413,1346,11681,1473,1,0,N,N,N,CP_Phys,TT_Task,DT_FixedDrtn,RV_OK,TK_NotStart,OCEC19780,Pipe surrounding,,1101,0,30,0,375,375,30,0,0,0,,,,2013-12-23 12:00,2013-12-28 12:00,,2013-07-16 11:00,2013-07-21 11:00,2013-07-16 11:00,2013-07-21 11:00,2013-07-16 11:00,2013-07-21 11:00,,2013-12-23 12:00,2013-12-28 12:00,,PT_Normal,,,,,U30daU9u8USW/1IxtHfiGw,j4fQdaupSjWjvhWgap+7sA,,,N,0,0,,,2013-06-23 13:01,2013-06-23 13:01,admin,admin
701,86414,1346,11681,1473,1,0,N,N,N,CP_Phys,TT_Task,DT_FixedDrtn,RV_OK,TK_NotStart,OCEC19790,Pressure testing,2969,1101,0,20,0,68,68,20,0,0,0,,,,2014-01-07 12:00,2014-01-11 12:00,,2013-07-31 11:00,2013-08-04 11:00,2013-07-31 11:00,2013-08-04 11:00,2013-07-31 11:00,2013-08-04 11:00,,2014-01-07 12:00,2014-01-11 12:00,,PT_Normal,,,,,Y/Fo58B/uU6T34+h4F87Kg,OlaDhio8CkG3m9XiVu4K2Q,,,N,0,0,,,2013-06-23 13:01,2013-06-23 13:01,admin,admin
702,86415,1346,11681,1473,1,0,N,N,N,CP_Phys,TT_Task,DT_FixedDrtn,RV_OK,TK_NotStart,OCEC19800,Backfilling & Compaction,2984,1101,0,20,0,186.666667,186.666667,20,60,0,60,,,,2014-01-11 12:00,2014-01-13 12:00,,2013-08-04 11:00,2013-08-06 11:00,2013-08-04 11:00,2013-08-06 11:00,2013-08-04 11:00,2013-08-06 11:00,,2014-01-11 12:00,2014-01-13 12:00,,PT_Normal,,,,,/64pNPnKzEmn4oM+mrY1rA,a3Fw2oId3U+NGjqUQ5BwGQ,,,N,0,0,,,2013-06-23 13:01,2013-06-23 13:01,admin,admin
703,86416,1346,11681,1473,1,0,N,N,N,CP_Phys,TT_Task,DT_FixedDrtn,RV_OK,TK_NotStart,OCEC19810,"Marker post and Marker Plates Fixing, (no.=9)",2971,1101,0,16,0,80,80,16,20,0,20,,,,2014-01-13 12:00,2014-01-15 08:00,,2013-08-06 11:00,2013-08-07 17:00,2013-08-06 11:00,2013-08-07 17:00,2013-08-06 11:00,2013-08-07 17:00,,2014-01-13 12:00,2014-01-15 08:00,,PT_Normal,,,,,EX+Ys6XncUGtt7aRFLNYtA,BDBm+7OxRUq+yI2l5H7BsQ,,,N,0,0,,,2013-06-23 13:01,2013-06-23 13:01,admin,admin
704,86417,1346,11681,1473,1,0,N,N,N,CP_Phys,TT_Task,DT_FixedDrtn,RV_OK,TK_NotStart,OCEC19820,Inspection,2971,1101,122,8,0,16,16,8,0,0,0,,,,2014-01-15 08:00,2014-01-15 16:00,,2013-08-12 07:00,2013-08-12 15:00,2013-08-12 07:00,2013-08-12 15:00,2013-08-12 07:00,2013-08-12 15:00,,2014-01-15 08:00,2014-01-15 16:00,,PT_Normal,,,,,Z/pGgqK/b0WoEusofcBdMQ,5c/JCNqTvEiRAzkKJrGe5w,,,N,0,0,,,2013-06-23 13:01,2013-06-23 13:01,admin,admin
705,86418,1346,11681,1473,1,0,N,N,N,CP_Phys,TT_Task,DT_FixedDrtn,RV_OK,TK_NotStart,OCEC19830,"Hydrant Fixing, (no.=2)",2994,1101,0,40,0,500,500,40,0,0,0,,,,2013-12-28 12:00,2014-01-01 12:00,,2013-07-21 11:00,2013-07-27 11:00,2013-07-21 11:00,2013-07-27 11:00,2013-07-21 11:00,2013-07-27 11:00,,2013-12-28 12:00,2014-01-01 12:00,,PT_Normal,,,,,Gc2ofEo0HEKL60Q+eRhpsw,2c+la/mWjUGdpVF8z/TVWw,,,N,0,0,,,2013-06-23 13:01,2013-06-23 13:01,admin,admin
706,86419,1346,11681,1473,1,0,N,N,N,CP_Phys,TT_Task,DT_FixedDrtn,RV_OK,TK_NotStart,OCEC19840,"Construction of Chambers and Hook-up, (no.=3)",2981,1101,0,40,0,240,240,40,0,0,0,,,,2014-01-01 12:00,2014-01-07 12:00,,2013-07-27 11:00,2013-07-31 11:00,2013-07-27 11:00,2013-07-31 11:00,2013-07-27 11:00,2013-07-31 11:00,,2014-01-01 12:00,2014-01-07 12:00,,PT_Normal,,,,,7eZyRnGu2EWE2gfFmzFpGQ,HYzuKYJFAUyZB+jVg10C1Q,,,N,0,0,,,2013-06-23 13:01,2013-06-23 13:01,admin,admin
707,86420,1346,11681,1473,1,0,N,N,N,CP_Phys,TT_Task,DT_FixedDrtn,RV_OK,TK_NotStart,OCEC13648,Inspection,,1101,0,10,0,0,0,10,0,0,0,,,,2013-12-09 12:00,2013-12-10 12:00,,2013-07-02 11:00,2013-07-03 11:00,2013-07-02 11:00,2013-07-03 11:00,2013-07-02 11:00,2013-07-03 11:00,,2013-12-09 12:00,2013-12-10 12:00,,PT_Normal,,,,,BoMfP6grE0CaZb7Jwb3JHg,rsJdQ1xACkawSZ3RznO0zQ,,,N,0,0,,,2013-06-23 13:01,2013-06-23 13:01,admin,admin
708,86421,1346,11681,1473,1,0,N,N,N,CP_Phys,TT_Task,DT_FixedDrtn,RV_OK,TK_NotStart,OCEC13649,Inspection,,1101,0,10,0,0,0,10,0,0,0,,,,2013-12-14 12:00,2013-12-15 12:00,,2013-07-07 11:00,2013-07-08 11:00,2013-07-07 11:00,2013-07-08 11:00,2013-07-07 11:00,2013-07-08 11:00,,2013-12-14 12:00,2013-12-15 12:00,,PT_Normal,,,,,spR3fv29SUOH8+lRxARzDA,Hdd3Ixb3Sk+eVYI+bLjpWw,,,N,0,0,,,2013-06-23 13:01,2013-06-23 13:01,admin,admin
709,86422,1346,11681,1473,1,0,N,N,N,CP_Phys,TT_Task,DT_FixedDrtn,RV_OK,TK_NotStart,OCEC13651,Inspection,,1101,0,10,0,0,0,10,0,0,0,,,,2013-12-22 12:00,2013-12-23 12:00,,2013-07-15 11:00,2013-07-16 11:00,2013-07-15 11:00,2013-07-16 11:00,2013-07-15 11:00,2013-07-16 11:00,,2013-12-22 12:00,2013-12-23 12:00,,PT_Normal,,,,,NrRqR7QtxEOhQ+Xt1Alqbw,r8hHjXIF6kak9oBd3jsX1Q,,,N,0,0,,,2013-06-23 13:01,2013-06-23 13:01,admin,admin
710,86423,1346,11681,1473,1,0,N,N,N,CP_Phys,TT_Task,DT_FixedDrtn,RV_OK,TK_NotStart,OCEC13652,Inspection,,1141,40,10,0,0,0,10,0,0,0,,,,2014-01-06 12:00,2014-01-07 12:00,,2013-07-24 11:00,2013-07-27 11:00,2013-07-24 11:00,2013-07-27 11:00,2013-07-24 11:00,2013-07-27 11:00,,2014-01-06 12:00,2014-01-07 12:00,,PT_Normal,,,,,IK+0uWjV3EOfo+JfkZmRnw,rcMq5zdObEm1fgAL4nZPrA,,,N,0,0,,,2013-06-23 13:01,2013-06-23 13:01,admin,admin
711,86424,1346,11681,1473,1,0,N,N,N,CP_Phys,TT_Task,DT_FixedDrtn,RV_OK,TK_NotStart,OCEC13625,HSE Requirments,2971,1101,0,24,0,40,40,24,0,0,0,,,,2013-11-26 08:00,2013-11-30 12:00,,2013-06-19 07:00,2013-06-23 11:00,2013-06-19 07:00,2013-06-23 11:00,2013-06-19 07:00,2013-06-23 11:00,,2013-11-26 08:00,2013-11-30 12:00,,PT_Normal,,,,,+yfv6Gn2HEOcqGJgu0ABxg,CnFWln+Gzk+vE2ZRYFsZaQ,,,N,0,0,,,2013-06-23 13:01,2013-06-23 13:01,admin,admin
712,86458,1346,11631,1473,1,0,N,N,N,CP_Phys,TT_Task,DT_FixedDrtn,RV_OK,TK_NotStart,OCEC13640,Completion of Balance Cable Lines Works after the Un-Contractual Milestone Completion Date in 31st May 2013,,979,900,10,0,0,0,10,0,0,0,,,,2014-01-14 16:00,2014-01-15 16:00,,2013-08-28 07:00,2013-08-28 17:00,2013-08-28 07:00,2013-08-28 17:00,2013-08-28 07:00,2013-08-28 17:00,,2014-01-14 16:00,2014-01-15 16:00,,PT_Normal,,,,,A0PUvSQ2aEeBSODZXQgRmQ,uTgR/BZURz6dLJUXDQy2gA,,,N,0,0,,,2013-06-23 13:01,2013-06-23 13:01,admin,admin
713,86504,1346,11691,1473,1,0,N,N,N,CP_Phys,TT_Task,DT_FixedDrtn,RV_OK,TK_NotStart,OCEC14280,Setting out and route survey,2983,1105,0,24,0,40,40,24,20,0,20,,,,2013-11-26 12:00,2013-11-30 16:00,,2013-06-19 07:00,2013-06-23 11:00,2013-06-19 07:00,2013-06-23 11:00,2013-06-19 07:00,2013-06-23 11:00,,2013-11-26 12:00,2013-11-30 16:00,,PT_Normal,,,,,PQydxZXIHUic9luUoUVvRw,gG3osghjQ/SQRi3ibw9Hag,,,N,0,0,,,2013-06-23 13:01,2013-06-23 13:01,admin,admin
714,86505,1346,11691,1473,1,0,N,N,N,CP_Phys,TT_Task,DT_FixedDrtn,RV_OK,TK_NotStart,OCEC14290,"Trench excavation, 252 m",2971,1105,0,80,0,480,480,80,160,0,160,,,,2013-11-30 16:00,2013-12-10 16:00,,2013-06-23 11:00,2013-07-03 11:00,2013-06-23 11:00,2013-07-03 11:00,2013-06-23 11:00,2013-07-03 11:00,,2013-11-30 16:00,2013-12-10 16:00,,PT_Normal,,,,,87BVs0KYIESKPO7bjcfq5A,C68YIrkVQGGqut2aKkCNRA,,,N,0,0,,,2013-06-23 13:01,2013-06-23 13:01,admin,admin
715,86506,1346,11691,1473,1,0,N,N,N,CP_Phys,TT_Task,DT_FixedDrtn,RV_OK,TK_NotStart,OCEC14300,Bed preparation,2971,1105,0,20,0,80,80,20,20,0,20,,,,2013-12-10 16:00,2013-12-14 16:00,,2013-07-03 11:00,2013-07-07 11:00,2013-07-03 11:00,2013-07-07 11:00,2013-07-03 11:00,2013-07-07 11:00,,2013-12-10 16:00,2013-12-14 16:00,,PT_Normal,,,,,qA+cK0DHn0CkbP3UDtwWIg,D6EuZM0jQVOY1smfWQkwwA,,,N,0,0,,,2013-06-23 13:01,2013-06-23 13:01,admin,admin
716,86507,1346,11691,1473,1,0,N,N,N,CP_Phys,TT_Task,DT_FixedDrtn,RV_OK,TK_NotStart,OCEC14310,"Duct laying, 3024 m",2969,1105,0,60,0,1320,1320,60,120,0,120,,,,2013-12-14 16:00,2013-12-22 16:00,,2013-07-07 11:00,2013-07-15 11:00,2013-07-07 11:00,2013-07-15 11:00,2013-07-07 11:00,2013-07-15 11:00,,2013-12-14 16:00,2013-12-22 16:00,,PT_Normal,,,,,nIaXArUFxE+Atcypk0BWtA,h+Uk36vhYk2a8QxUXF0veg,,,N,0,0,,,2013-06-23 13:01,2013-06-23 13:01,admin,admin
717,86508,1346,11691,1473,1,0,N,N,N,CP_Phys,TT_Task,DT_FixedDrtn,RV_OK,TK_NotStart,OCEC14320,Backfilling and compaction,2971,1105,0,20,0,120,120,20,20,0,20,,,,2014-01-05 16:00,2014-01-07 16:00,,2013-07-29 11:00,2013-07-31 11:00,2013-07-29 11:00,2013-07-31 11:00,2013-07-29 11:00,2013-07-31 11:00,,2014-01-05 16:00,2014-01-07 16:00,,PT_Normal,,,,,kPSJYGBEaESH18hgLmtKkg,JTB6mZvnM0uJOg4F9kUaOw,,,N,0,0,,,2013-06-23 13:01,2013-06-23 13:01,admin,admin
718,86509,1346,11691,1473,1,0,N,N,N,CP_Phys,TT_Task,DT_FixedDrtn,RV_OK,TK_NotStart,OCEC14330,Marker post  and Marker Plates fixing,2971,1105,0,60,0,180,180,60,0,0,0,,,,2014-01-07 16:00,2014-01-15 16:00,,2013-07-31 11:00,2013-08-12 11:00,2013-07-31 11:00,2013-08-12 11:00,2013-07-31 11:00,2013-08-12 11:00,,2014-01-07 16:00,2014-01-15 16:00,,PT_Normal,,,,,gij3ZEAZPUWYvK0kfsWIpg,T6PkzkK8IUafJpe2Gcm2DQ,,,N,0,0,,,2013-06-23 13:01,2013-06-23 13:01,admin,admin
719,86510,1346,11691,1473,1,0,N,N,N,CP_Phys,TT_Task,DT_FixedDrtn,RV_OK,TK_NotStart,OCEC14340,"Construction of Manholes, (no.=5)",2981,1105,0,60,0,360,360,60,0,0,0,,,,2013-12-22 16:00,2013-12-30 16:00,,2013-07-15 11:00,2013-07-23 11:00,2013-07-15 11:00,2013-07-23 11:00,2013-07-15 11:00,2013-07-23 11:00,,2013-12-22 16:00,2013-12-30 16:00,,PT_Normal,,,,,y2Jo1tfEf0uX9SY7pO7V2g,/wd49kIQ/U+umPTqY35T7A,,,N,0,0,,,2013-06-23 13:01,2013-06-23 13:01,admin,admin
720,86511,1346,11691,1473,1,0,N,N,N,CP_Phys,TT_Task,DT_FixedDrtn,RV_OK,TK_NotStart,OCEC14350,Inspection and Testing,2969,1105,0,40,0,80,80,40,0,0,0,,,,2013-12-30 16:00,2014-01-05 16:00,,2013-07-23 11:00,2013-07-29 11:00,2013-07-23 11:00,2013-07-29 11:00,2013-07-23 11:00,2013-07-29 11:00,,2013-12-30 16:00,2014-01-05 16:00,,PT_Normal,,,,,bmbT6pclPEWekcqjMRw0qA,/uabmo6OzEGm/T1DVRzlsQ,,,N,0,0,,,2013-06-23 13:01,2013-06-23 13:01,admin,admin
721,86512,1346,11691,1473,1,0,N,N,N,CP_Phys,TT_Task,DT_FixedDrtn,RV_OK,TK_NotStart,OCEC10704,HSE Requirments,2971,1105,0,24,0,40,40,24,0,0,0,,,,2013-11-26 12:00,2013-11-30 16:00,,2013-06-19 07:00,2013-06-23 11:00,2013-06-19 07:00,2013-06-23 11:00,2013-06-19 07:00,2013-06-23 11:00,,2013-11-26 12:00,2013-11-30 16:00,,PT_Normal,,,,,dCY6RnT1hUyPvRU7xxVW8g,eK/DvM9JX0GN/SXZwjczdg,,,N,0,0,,,2013-06-23 13:01,2013-06-23 13:01,admin,admin
722,86513,1346,11691,1473,1,0,N,N,N,CP_Phys,TT_Task,DT_FixedDrtn,RV_OK,TK_NotStart,OCEC12344,Inspection,,1105,0,10,0,0,0,10,0,0,0,,,,2013-12-09 16:00,2013-12-10 16:00,,2013-07-02 11:00,2013-07-03 11:00,2013-07-02 11:00,2013-07-03 11:00,2013-07-02 11:00,2013-07-03 11:00,,2013-12-09 16:00,2013-12-10 16:00,,PT_Normal,,,,,B5+tVEPVkEio1450eFcP9g,1BTHVWBeWEygPLbNXUm9zQ,,,N,0,0,,,2013-06-23 13:01,2013-06-23 13:01,admin,admin
723,86514,1346,11691,1473,1,0,N,N,N,CP_Phys,TT_Task,DT_FixedDrtn,RV_OK,TK_NotStart,OCEC12345,Inspection,,1105,0,10,0,0,0,10,0,0,0,,,,2013-12-11 16:00,2013-12-14 16:00,,2013-07-06 11:00,2013-07-07 11:00,2013-07-06 11:00,2013-07-07 11:00,2013-07-06 11:00,2013-07-07 11:00,,2013-12-11 16:00,2013-12-14 16:00,,PT_Normal,,,,,amkTmwEhtEyTQjWkwafDVg,Q+15+iRT3U6UL3UXifnaKw,,,N,0,0,,,2013-06-23 13:01,2013-06-23 13:01,admin,admin
724,86515,1346,11691,1473,1,0,N,N,N,CP_Phys,TT_Task,DT_FixedDrtn,RV_OK,TK_NotStart,OCEC12346,Inspection,,1105,0,10,0,0,0,10,0,0,0,,,,2013-12-21 16:00,2013-12-22 16:00,,2013-07-14 11:00,2013-07-15 11:00,2013-07-14 11:00,2013-07-15 11:00,2013-07-14 11:00,2013-07-15 11:00,,2013-12-21 16:00,2013-12-22 16:00,,PT_Normal,,,,,vYyf96LpokuoWle8LPmx3Q,DCN9PAkd7kizngi7ZNsp+g,,,N,0,0,,,2013-06-23 13:01,2013-06-23 13:01,admin,admin
725,86516,1346,11691,1473,1,0,N,N,N,CP_Phys,TT_Task,DT_FixedDrtn,RV_OK,TK_NotStart,OCEC12347,Inspection,,1105,126,10,0,0,0,10,0,0,0,,,,2014-01-14 16:00,2014-01-15 16:00,,2013-08-07 11:00,2013-08-12 11:00,2013-08-07 11:00,2013-08-12 11:00,2013-08-07 11:00,2013-08-12 11:00,,2014-01-14 16:00,2014-01-15 16:00,,PT_Normal,,,,,uocZxihJA0aqi0IWiWrNew,+PpNqJxGXkOrp3k9seczvA,,,N,0,0,,,2013-06-23 13:01,2013-06-23 13:01,admin,admin
726,86517,1346,11692,1473,1,0,N,N,N,CP_Phys,TT_Task,DT_FixedDrtn,RV_OK,TK_NotStart,OCEC10370,Setting out and route survey,2983,1105,0,24,0,40,40,24,20,0,20,,,,2013-11-26 12:00,2013-11-30 16:00,,2013-06-19 07:00,2013-06-23 11:00,2013-06-19 07:00,2013-06-23 11:00,2013-06-19 07:00,2013-06-23 11:00,,2013-11-26 12:00,2013-11-30 16:00,,PT_Normal,,,,,DRnBnckUoUW65Fo1vmXBiA,d7K2BCYZRh263T7V7tWRQA,,,N,0,0,,,2013-06-23 13:01,2013-06-23 13:01,admin,admin
727,86518,1346,11692,1473,1,0,N,N,N,CP_Phys,TT_Task,DT_FixedDrtn,RV_OK,TK_NotStart,OCEC10380,"Trench excavation, 275 m",2971,1105,0,80,0,480,480,80,160,0,160,,,,2013-11-30 16:00,2013-12-10 16:00,,2013-06-23 11:00,2013-07-03 11:00,2013-06-23 11:00,2013-07-03 11:00,2013-06-23 11:00,2013-07-03 11:00,,2013-11-30 16:00,2013-12-10 16:00,,PT_Normal,,,,,cAKwtw6cLkCxlA0h8dTtYw,ExuZx54uSYuEQKAC9cxh6g,,,N,0,0,,,2013-06-23 13:01,2013-06-23 13:01,admin,admin
728,86519,1346,11692,1473,1,0,N,N,N,CP_Phys,TT_Task,DT_FixedDrtn,RV_OK,TK_NotStart,OCEC10390,Bed preparation,2971,1105,0,20,0,80,80,20,20,0,20,,,,2013-12-10 16:00,2013-12-14 16:00,,2013-07-03 11:00,2013-07-07 11:00,2013-07-03 11:00,2013-07-07 11:00,2013-07-03 11:00,2013-07-07 11:00,,2013-12-10 16:00,2013-12-14 16:00,,PT_Normal,,,,,no224rKP4UaKklYPnvTkzw,2rTSYJUkSWKeYynIxR/KRQ,,,N,0,0,,,2013-06-23 13:01,2013-06-23 13:01,admin,admin
729,86520,1346,11692,1473,1,0,N,N,N,CP_Phys,TT_Task,DT_FixedDrtn,RV_OK,TK_NotStart,OCEC10400,"Cable laying, 850 m",2969,1105,0,60,0,300,300,60,120,0,120,,,,2013-12-14 16:00,2013-12-22 16:00,,2013-07-07 11:00,2013-07-15 11:00,2013-07-07 11:00,2013-07-15 11:00,2013-07-07 11:00,2013-07-15 11:00,,2013-12-14 16:00,2013-12-22 16:00,,PT_Normal,,,,,VAIgo21WhEiMchYsAqoLYg,b75NpjzzQQWr2u+JJlqJ8g,,,N,0,0,,,2013-06-23 13:01,2013-06-23 13:01,admin,admin
730,86521,1346,11692,1473,1,0,N,N,N,CP_Phys,TT_Task,DT_FixedDrtn,RV_OK,TK_NotStart,OCEC10510,Backfilling and compaction,2984,1105,0,20,0,120,120,20,20,0,20,,,,2014-01-05 16:00,2014-01-07 16:00,,2013-07-29 11:00,2013-07-31 11:00,2013-07-29 11:00,2013-07-31 11:00,2013-07-29 11:00,2013-07-31 11:00,,2014-01-05 16:00,2014-01-07 16:00,,PT_Normal,,,,,JscbrxaJ1UCefQgOblgDRQ,mkyACwFcT3GPR9yZblcGRQ,,,N,0,0,,,2013-06-23 13:01,2013-06-23 13:01,admin,admin
731,86522,1346,11692,1473,1,0,N,N,N,CP_Phys,TT_Task,DT_FixedDrtn,RV_OK,TK_NotStart,OCEC10520,Marker post  and marker plates fixing,2971,1105,0,60,0,180,180,60,0,0,0,,,,2014-01-07 16:00,2014-01-15 16:00,,2013-07-31 11:00,2013-08-12 11:00,2013-07-31 11:00,2013-08-12 11:00,2013-07-31 11:00,2013-08-12 11:00,,2014-01-07 16:00,2014-01-15 16:00,,PT_Normal,,,,,scOpgdGHC06s0LqNnjnGTg,0jYP262WQ+isP93Cm16fMg,,,N,0,0,,,2013-06-23 13:01,2013-06-23 13:01,admin,admin
732,86523,1346,11692,1473,1,0,N,N,N,CP_Phys,TT_Task,DT_FixedDrtn,RV_OK,TK_NotStart,OCEC13990,"Cable termination/Joining, (no.=4)",2971,1105,0,60,0,240,240,60,60,0,60,,,,2013-12-22 16:00,2013-12-30 16:00,,2013-07-15 11:00,2013-07-23 11:00,2013-07-15 11:00,2013-07-23 11:00,2013-07-15 11:00,2013-07-23 11:00,,2013-12-22 16:00,2013-12-30 16:00,,PT_Normal,,,,,DoNAyN/QYE+U4Y1TampDig,R06Y1nMppEinmNIm9w4wmw,,,N,0,0,,,2013-06-23 13:01,2013-06-23 13:01,admin,admin
733,86524,1346,11692,1473,1,0,N,N,N,CP_Phys,TT_Task,DT_FixedDrtn,RV_OK,TK_NotStart,OCEC14000,Inspection and Testing,2969,1105,0,40,0,80,80,40,0,0,0,,,,2013-12-30 16:00,2014-01-05 16:00,,2013-07-23 11:00,2013-07-29 11:00,2013-07-23 11:00,2013-07-29 11:00,2013-07-23 11:00,2013-07-29 11:00,,2013-12-30 16:00,2014-01-05 16:00,,PT_Normal,,,,,/Wv7vetPGUi7mAcgjZJ+Zg,vrVrp8CXa0Kl53p0gMLLGw,,,N,0,0,,,2013-06-23 13:01,2013-06-23 13:01,admin,admin
734,86525,1346,11692,1473,1,0,N,N,N,CP_Phys,TT_Task,DT_FixedDrtn,RV_OK,TK_NotStart,OCEC9928,HSE Requirments,2971,1105,0,20,0,40,40,20,0,0,0,,,,2013-11-26 16:00,2013-11-30 16:00,,2013-06-19 11:00,2013-06-23 11:00,2013-06-19 11:00,2013-06-23 11:00,2013-06-19 11:00,2013-06-23 11:00,,2013-11-26 16:00,2013-11-30 16:00,,PT_Normal,,,,,/Hr8e7kVTU6OpAAkogL9tQ,sul/Oc+csUeT5cnoUOSnTQ,,,N,0,0,,,2013-06-23 13:01,2013-06-23 13:01,admin,admin
735,86526,1346,11692,1473,1,0,N,N,N,CP_Phys,TT_Task,DT_FixedDrtn,RV_OK,TK_NotStart,OCEC9957,Inspection,,1105,0,10,0,0,0,10,0,0,0,,,,2013-12-09 16:00,2013-12-10 16:00,,2013-07-02 11:00,2013-07-03 11:00,2013-07-02 11:00,2013-07-03 11:00,2013-07-02 11:00,2013-07-03 11:00,,2013-12-09 16:00,2013-12-10 16:00,,PT_Normal,,,,,IYRj+BOF+k2N2vE9EUOswQ,tzD/77v2X0CdPWsx6/dDww,,,N,0,0,,,2013-06-23 13:01,2013-06-23 13:01,admin,admin
736,86527,1346,11692,1473,1,0,N,N,N,CP_Phys,TT_Task,DT_FixedDrtn,RV_OK,TK_NotStart,OCEC9958,Inspection,,1105,0,10,0,0,0,10,0,0,0,,,,2013-12-11 16:00,2013-12-14 16:00,,2013-07-06 11:00,2013-07-07 11:00,2013-07-06 11:00,2013-07-07 11:00,2013-07-06 11:00,2013-07-07 11:00,,2013-12-11 16:00,2013-12-14 16:00,,PT_Normal,,,,,nAd6I1zOZkiEeCeIpCw4Eg,TD5EsNGxBU2qLUGohRns2g,,,N,0,0,,,2013-06-23 13:01,2013-06-23 13:01,admin,admin
737,86528,1346,11692,1473,1,0,N,N,N,CP_Phys,TT_Task,DT_FixedDrtn,RV_OK,TK_NotStart,OCEC9959,Inspection,,1105,126,10,0,0,0,10,0,0,0,,,,2014-01-14 16:00,2014-01-15 16:00,,2013-08-07 11:00,2013-08-12 11:00,2013-08-07 11:00,2013-08-12 11:00,2013-08-07 11:00,2013-08-12 11:00,,2014-01-14 16:00,2014-01-15 16:00,,PT_Normal,,,,,WnQQReFAtEqaEZrr5dnkfw,QLpv0Nf52ku5BiUA5tpGZA,,,N,0,0,,,2013-06-23 13:01,2013-06-23 13:01,admin,admin
738,86667,1346,11634,1473,1,0,N,N,N,CP_Phys,TT_Task,DT_FixedDrtn,RV_OK,TK_NotStart,OCEC16870,Completion of Pump Rooms and Substation Works,,79,0,8,0,0,0,8,0,0,0,,,,2014-01-15 08:00,2014-01-15 16:00,,2014-01-05 09:00,2014-01-05 17:00,2014-01-05 09:00,2014-01-05 17:00,2014-01-05 09:00,2014-01-05 17:00,,2014-01-15 08:00,2014-01-15 16:00,,PT_Normal,,,,,0JaI/W7aIkG3HV3IYTs2Ag,MoopeBk5TBCuP/3mSFIwig,,,N,0,0,,,2013-06-23 13:01,2013-06-23 13:01,admin,admin
739,86704,1346,11742,1473,1,0,N,N,N,CP_Phys,TT_Task,DT_FixedDrtn,RV_OK,TK_NotStart,OCEC6720,Setting out and Excavation,2983,79,0,60,0,600,600,60,300,0,300,,,,2013-07-13 16:00,2013-07-21 16:00,,2013-07-02 07:00,2013-07-09 17:00,2013-07-02 07:00,2013-07-09 17:00,2013-07-02 07:00,2013-07-09 17:00,,2013-07-13 16:00,2013-07-21 16:00,,PT_Normal,,,,,HB4FW8kGeEqRbBsKUPyZeQ,YDZbaIuU00enBPBZi8NACQ,,,N,0,0,,,2013-06-23 13:01,2013-06-23 13:01,admin,admin
740,86705,1346,11742,1473,1,0,N,N,N,CP_Phys,TT_Task,DT_FixedDrtn,RV_OK,TK_NotStart,OCEC6730,Finishing Works,2991,79,0,150,0,1350,1350,150,0,0,0,,,,2013-09-11 16:00,2013-10-02 16:00,,2013-09-02 07:00,2013-09-22 17:00,2013-09-02 07:00,2013-09-22 17:00,2013-09-02 07:00,2013-09-22 17:00,,2013-09-11 16:00,2013-10-02 16:00,,PT_Normal,,,,,XYDFYrg1SEWIc9t0GBpqcg,9ix6bGOsX0+c6cPIxN3vfw,,,N,0,0,,,2013-06-23 13:01,2013-06-23 13:01,admin,admin
741,86706,1346,11742,1473,1,0,N,N,N,CP_Phys,TT_Task,DT_FixedDrtn,RV_OK,TK_NotStart,OCEC6740,Mechanical and Electrical Services,,79,0,100,0,0,0,100,0,0,0,,,,2013-10-02 16:00,2013-10-16 16:00,,2013-09-23 07:00,2013-10-06 17:00,2013-09-23 07:00,2013-10-06 17:00,2013-09-23 07:00,2013-10-06 17:00,,2013-10-02 16:00,2013-10-16 16:00,,PT_Normal,,,,,NK0+Fmi1EE6+7O9p0vdUJQ,wqIryW+fckesfCp3wZ9pGA,,,N,0,0,,,2013-06-23 13:01,2013-06-23 13:01,admin,admin
742,86707,1346,11742,1473,1,0,N,N,N,CP_Phys,TT_Task,DT_FixedDrtn,RV_OK,TK_NotStart,OCEC16890,Substructure Works,2981,79,0,150,0,6450,6450,150,600,0,600,,,,2013-07-21 16:00,2013-08-13 16:00,,2013-07-10 07:00,2013-07-30 17:00,2013-07-10 07:00,2013-07-30 17:00,2013-07-10 07:00,2013-07-30 17:00,,2013-07-21 16:00,2013-08-13 16:00,,PT_Normal,,,,,8JUZJ0CMIU6knQFdcUk6cw,RqG/fpzXjUajTqK0GspjDQ,,,N,0,0,,,2013-06-23 13:01,2013-06-23 13:01,admin,admin
743,86708,1346,11742,1473,1,0,N,N,N,CP_Phys,TT_Task,DT_FixedDrtn,RV_OK,TK_NotStart,OCEC16900,Superstructure Works,2981,79,0,210,0,6090,6090,210,840,0,840,,,,2013-08-13 16:00,2013-09-11 16:00,,2013-07-31 07:00,2013-09-01 17:00,2013-07-31 07:00,2013-09-01 17:00,2013-07-31 07:00,2013-09-01 17:00,,2013-08-13 16:00,2013-09-11 16:00,,PT_Normal,,,,,BS6O3lwxe0yWEVn1JID2og,gBxv7rT0nE+pS1vdEqSVcQ,,,N,0,0,,,2013-06-23 13:01,2013-06-23 13:01,admin,admin
744,86709,1346,11753,1473,1,0,N,N,N,CP_Phys,TT_Task,DT_FixedDrtn,RV_OK,TK_NotStart,OCEC7120,Cable laying and Cable termination joining,2990,79,0,150,0,300,300,150,150,0,150,,,,2013-11-13 16:00,2013-12-08 16:00,,2013-11-04 07:00,2013-11-26 17:00,2013-11-04 07:00,2013-11-26 17:00,2013-11-04 07:00,2013-11-26 17:00,,2013-11-13 16:00,2013-12-08 16:00,,PT_Normal,,,,,9/aziHy0BUi+DxpFV5Nasg,tEPeuvtLj0aQ7T7DKsYLGQ,,,N,0,0,,,2013-06-23 13:01,2013-06-23 13:01,admin,admin
745,86710,1346,11753,1473,1,0,N,N,N,CP_Phys,TT_Task,DT_FixedDrtn,RV_OK,TK_NotStart,OCEC7130,Earthing of equipment,2971,79,0,120,0,240,240,120,0,0,0,,,,2013-12-14 16:00,2013-12-30 16:00,,2013-12-03 07:00,2013-12-18 17:00,2013-12-03 07:00,2013-12-18 17:00,2013-12-03 07:00,2013-12-18 17:00,,2013-12-14 16:00,2013-12-30 16:00,,PT_Normal,,,,,l7dmARK61kWhT0JEJfdVvQ,jNuKbRdyW0aOiYnGibuCQg,,,N,0,0,,,2013-06-23 13:01,2013-06-23 13:01,admin,admin
746,86711,1346,11753,1473,1,0,N,N,N,CP_Phys,TT_Task,DT_FixedDrtn,RV_OK,TK_NotStart,OCEC7140,Inspection and testing,2969,79,0,100,0,300,300,100,0,0,0,,,,2014-01-01 16:00,2014-01-15 16:00,,2013-12-23 07:00,2014-01-05 17:00,2013-12-23 07:00,2014-01-05 17:00,2013-12-23 07:00,2014-01-05 17:00,,2014-01-01 16:00,2014-01-15 16:00,,PT_Normal,,,,,Xz13gQZMvEG6EWb6bttR6A,IHcO7tciuEe0ycpGe0RBUA,,,N,0,0,,,2013-06-23 13:01,2013-06-23 13:01,admin,admin
747,86712,1346,11753,1473,1,0,N,N,N,CP_Phys,TT_Task,DT_FixedDrtn,RV_OK,TK_NotStart,OCEC18160,Equipment installation and instrumentation,2971,79,0,150,0,600,600,150,300,0,300,,,,2013-10-21 16:00,2013-11-11 16:00,,2013-10-12 07:00,2013-10-30 17:00,2013-10-12 07:00,2013-10-30 17:00,2013-10-12 07:00,2013-10-30 17:00,,2013-10-21 16:00,2013-11-11 16:00,,PT_Normal,,,,,G/yKerWJPU2ntvFHSmIYMw,OWIsqrW2S0uHbql/aQNE6Q,,,N,0,0,,,2013-06-23 13:01,2013-06-23 13:01,admin,admin
748,86713,1346,11741,1473,1,0,N,N,N,CP_Phys,TT_Task,DT_FixedDrtn,RV_OK,TK_NotStart,OCEC7090,Cable laying and Cable termination joining,2990,169,0,150,0,450,450,150,300,0,300,,,,2013-11-13 16:00,2013-12-08 16:00,,2013-10-22 07:00,2013-11-11 17:00,2013-10-22 07:00,2013-11-11 17:00,2013-10-22 07:00,2013-11-11 17:00,,2013-11-13 16:00,2013-12-08 16:00,,PT_Normal,,,,,BdjdKflK9UGVlM3wCxn2cA,tEPeuvtLj0aQ7T7DKsYLGQ,,,N,0,0,,,2013-06-23 13:01,2013-06-23 13:01,admin,admin
749,86714,1346,11741,1473,1,0,N,N,N,CP_Phys,TT_Task,DT_FixedDrtn,RV_OK,TK_NotStart,OCEC7100,Earthing of equipment,,169,0,120,0,0,0,120,0,0,0,,,,2013-12-14 16:00,2013-12-30 16:00,,2013-11-18 07:00,2013-12-07 17:00,2013-11-18 07:00,2013-12-07 17:00,2013-11-18 07:00,2013-12-07 17:00,,2013-12-14 16:00,2013-12-30 16:00,,PT_Normal,,,,,nuyChVqunkenVt1uXQM1vw,jNuKbRdyW0aOiYnGibuCQg,,,N,0,0,,,2013-06-23 13:01,2013-06-23 13:01,admin,admin
750,86715,1346,11741,1473,1,0,N,N,N,CP_Phys,TT_Task,DT_FixedDrtn,RV_OK,TK_NotStart,OCEC7110,Inspection and testing,2969,169,90,100,0,300,300,100,0,0,0,,,,2014-01-01 16:00,2014-01-15 16:00,,2013-12-10 07:00,2013-12-23 17:00,2013-12-10 07:00,2013-12-23 17:00,2013-12-10 07:00,2013-12-23 17:00,,2014-01-01 16:00,2014-01-15 16:00,,PT_Normal,,,,,H/BJZLpYzUumMn4NlhYGdA,IHcO7tciuEe0ycpGe0RBUA,,,N,0,0,,,2013-06-23 13:01,2013-06-23 13:01,admin,admin
751,86716,1346,11741,1473,1,0,N,N,N,CP_Phys,TT_Task,DT_FixedDrtn,RV_OK,TK_NotStart,OCEC18150,Equipment installation and instrumentation,2971,169,0,150,0,1650,1650,150,300,0,300,,,,2013-10-21 16:00,2013-11-11 16:00,,2013-09-29 07:00,2013-10-19 17:00,2013-09-29 07:00,2013-10-19 17:00,2013-09-29 07:00,2013-10-19 17:00,,2013-10-21 16:00,2013-11-11 16:00,,PT_Normal,,,,,Jq9oC6AdpUK41G3hRoF4Sg,OWIsqrW2S0uHbql/aQNE6Q,,,N,0,0,,,2013-06-23 13:01,2013-06-23 13:01,admin,admin
752,86717,1346,11744,1473,1,0,N,N,N,CP_Phys,TT_Task,DT_FixedDrtn,RV_OK,TK_NotStart,OCEC6570,Setting out and Excavation,2983,169,0,60,0,600,600,60,360,0,360,,,,2013-07-13 16:00,2013-07-21 16:00,,2013-06-19 07:00,2013-06-26 17:00,2013-06-19 07:00,2013-06-26 17:00,2013-06-19 07:00,2013-06-26 17:00,,2013-07-13 16:00,2013-07-21 16:00,,PT_Normal,,,,,q+Lfj8Fm5kefibBWkSfqJw,i1eXS1u8SbqbbWczDSJgQw,,,N,0,0,,,2013-06-23 13:01,2013-06-23 13:01,admin,admin
753,86718,1346,11744,1473,1,0,N,N,N,CP_Phys,TT_Task,DT_FixedDrtn,RV_OK,TK_NotStart,OCEC6600,Finishing Works,2991,169,0,150,0,2460,2460,150,0,0,0,,,,2013-09-11 16:00,2013-10-02 16:00,,2013-08-20 07:00,2013-09-09 17:00,2013-08-20 07:00,2013-09-09 17:00,2013-08-20 07:00,2013-09-09 17:00,,2013-09-11 16:00,2013-10-02 16:00,,PT_Normal,,,,,8zirBz1FLkWKFRfAdGOLbA,Rm11DSYyRMyv1dRU9PN4vw,,,N,0,0,,,2013-06-23 13:01,2013-06-23 13:01,admin,admin
754,86719,1346,11744,1473,1,0,N,N,N,CP_Phys,TT_Task,DT_FixedDrtn,RV_OK,TK_NotStart,OCEC6610,Mechanical and Electrical Services,2971,169,0,100,0,600,600,100,0,0,0,,,,2013-10-02 16:00,2013-10-16 16:00,,2013-09-10 07:00,2013-09-23 17:00,2013-09-10 07:00,2013-09-23 17:00,2013-09-10 07:00,2013-09-23 17:00,,2013-10-02 16:00,2013-10-16 16:00,,PT_Normal,,,,,SH/zFXjg2kKipYvGQw5+9w,4Ul2T+P3QwyCyoiGAxokBQ,,,N,0,0,,,2013-06-23 13:01,2013-06-23 13:01,admin,admin
755,86720,1346,11744,1473,1,0,N,N,N,CP_Phys,TT_Task,DT_FixedDrtn,RV_OK,TK_NotStart,OCEC14470,Substructure Works,2981,169,0,150,0,8700,8700,150,600,0,600,,,,2013-07-21 16:00,2013-08-13 16:00,,2013-06-29 07:00,2013-07-17 17:00,2013-06-29 07:00,2013-07-17 17:00,2013-06-29 07:00,2013-07-17 17:00,,2013-07-21 16:00,2013-08-13 16:00,,PT_Normal,,,,,FEuaz0qI+EawxUSwF+HzlQ,N7qe1Q1QS/6mQtZUPkuGAg,,,N,0,0,,,2013-06-23 13:01,2013-06-23 13:01,admin,admin
756,86721,1346,11744,1473,1,0,N,N,N,CP_Phys,TT_Task,DT_FixedDrtn,RV_OK,TK_NotStart,OCEC16830,Superstructure Works,2981,169,0,210,0,12390,12390,210,840,0,840,,,,2013-08-13 16:00,2013-09-11 16:00,,2013-07-20 07:00,2013-08-19 17:00,2013-07-20 07:00,2013-08-19 17:00,2013-07-20 07:00,2013-08-19 17:00,,2013-08-13 16:00,2013-09-11 16:00,,PT_Normal,,,,,HuYyw7w4ZUmhc+IsFCchaw,JiNkxHrQSeOPTd5twFjONQ,,,N,0,0,,,2013-06-23 13:01,2013-06-23 13:01,admin,admin
757,86722,1346,11508,1473,1,0,N,N,N,CP_Phys,TT_Task,DT_FixedDrtn,RV_OK,TK_NotStart,OCEC5870,Ministry of Water (PAEW) - Water and Irrigation Distribution system,2974,979,0,900,0,479.999997,479.999997,900,0,0,0,,,,2013-09-09 16:00,2014-01-15 16:00,,2013-04-23 07:00,2013-08-28 17:00,2013-04-23 07:00,2013-08-28 17:00,2013-04-23 07:00,2013-08-28 17:00,,2013-09-09 16:00,2014-01-15 16:00,,PT_Normal,,,,,lX44VOSxPUWvZJ9Wr7cq+A,y9qZVNVYSQuMFeT3ANHp3w,,,N,0,0,,,2013-06-23 13:01,2013-06-23 13:01,admin,admin
758,86723,1346,11508,1473,1,0,N,N,N,CP_Phys,TT_Task,DT_FixedDrtn,RV_OK,TK_NotStart,OCEC5871,HAYA - Sewage system,2974,979,0,900,0,479.999997,479.999997,900,0,0,0,,,,2013-09-09 16:00,2014-01-15 16:00,,2013-04-23 07:00,2013-08-28 17:00,2013-04-23 07:00,2013-08-28 17:00,2013-04-23 07:00,2013-08-28 17:00,,2013-09-09 16:00,2014-01-15 16:00,,PT_Normal,,,,,EBOk8kW7HECa+FVP5ckeWQ,eK91eirZUUibwBGcPrgQig,,,N,0,0,,,2013-06-23 13:01,2013-06-23 13:01,admin,admin
759,86724,1346,11508,1473,1,0,N,N,N,CP_Phys,TT_Task,DT_FixedDrtn,RV_OK,TK_NotStart,OCEC5872,MEDC - Total Electrical distribution system,2974,79,0,500,0,266.666665,266.666665,500,0,0,0,,,,2013-05-04 16:00,2013-07-13 16:00,,2013-04-23 07:00,2013-07-01 17:00,2013-04-23 07:00,2013-07-01 17:00,2013-04-23 07:00,2013-07-01 17:00,,2013-05-04 16:00,2013-07-13 16:00,,PT_Normal,,,,,2i0GWhxiJE2xqgQC41oklQ,eK91eirZUUibwBGcPrgQig,,,N,0,0,,,2013-06-23 13:01,2013-06-23 13:01,admin,admin
760,86725,1346,11508,1473,1,0,N,N,N,CP_Phys,TT_Task,DT_FixedDrtn,RV_OK,TK_NotStart,OCEC5873,Omantel/Nawras,2974,979,0,900,0,479.999997,479.999997,900,0,0,0,,,,2013-09-09 16:00,2014-01-15 16:00,,2013-04-23 07:00,2013-08-28 17:00,2013-04-23 07:00,2013-08-28 17:00,2013-04-23 07:00,2013-08-28 17:00,,2013-09-09 16:00,2014-01-15 16:00,,PT_Normal,,,,,frtoCr0A90adX3mwRZY9ZQ,eK91eirZUUibwBGcPrgQig,,,N,0,0,,,2013-06-23 13:01,2013-06-23 13:01,admin,admin
761,86726,1346,11508,1473,1,0,N,N,N,CP_Phys,TT_Task,DT_FixedDrtn,RV_OK,TK_NotStart,OCEC5874,"Others (ROP, MOD)",2974,979,900,900,0,479.999997,479.999997,900,0,0,0,,,,2013-09-09 16:00,2014-01-15 16:00,,2013-04-23 07:00,2013-08-28 17:00,2013-04-23 07:00,2013-08-28 17:00,2013-04-23 07:00,2013-08-28 17:00,,2013-09-09 16:00,2014-01-15 16:00,,PT_Normal,,,,,qoJWFDraGEW40NyztlkSDg,zQfS9oEZlEeMJSBpT0zbsA,,,N,0,0,,,2013-06-23 13:01,2013-06-23 13:01,admin,admin
762,86727,1346,11508,1473,1,0,N,N,N,CP_Phys,TT_Task,DT_FixedDrtn,RV_OK,TK_NotStart,OCEC5875,Municipality,2974,979,900,900,0,479.999997,479.999997,900,0,0,0,,,,2013-09-09 16:00,2014-01-15 16:00,,2013-04-23 07:00,2013-08-28 17:00,2013-04-23 07:00,2013-08-28 17:00,2013-04-23 07:00,2013-08-28 17:00,,2013-09-09 16:00,2014-01-15 16:00,,PT_Normal,,,,,pdd2LBEL9UyB/fpUbWvM3Q,FDlEyYrBhUWUzPImF/jv/A,,,N,0,0,,,2013-06-23 13:01,2013-06-23 13:01,admin,admin
763,86728,1346,11512,1473,1,100,N,N,N,CP_Phys,TT_Task,DT_FixedDrtn,RV_OK,TK_Complete,OCEC4000,Recieve of drawings and Documents,2972,,,0,48,0,48,48,0,0,0,,2012-12-17 07:00,2012-12-23 15:00,2013-05-15 16:00,2013-05-15 16:00,,2013-04-23 00:00,2013-04-23 00:00,,,2012-12-17 07:00,2012-12-23 15:00,,,,,PT_Normal,,,,,XmzErSA1OEiLJwtSTzoGKA,vo8g8La5Q4egU3xEbIh0yA,,,N,48,0,,,2013-06-23 13:01,2013-06-23 13:01,admin,admin
764,86729,1346,11512,1473,1,100,N,N,N,CP_Phys,TT_Task,DT_FixedDrtn,RV_OK,TK_Complete,OCEC4010,Establishment of control point,2983,,,0,16,0,16,16,0,0,0,,2012-12-17 07:00,2012-12-18 13:00,2013-05-15 16:00,2013-05-15 16:00,,2013-04-23 00:00,2013-04-23 00:00,,,2012-12-17 07:00,2012-12-18 13:00,,,,,PT_Normal,,,,,b5tDUvYHkEKxJ4NsHOmAJQ,D6/r4jsdQw6btGUOzcMdBg,,,N,16,0,,,2013-06-23 13:01,2013-06-23 13:01,admin,admin
765,86730,1346,11512,1473,1,100,N,N,N,CP_Phys,TT_Task,DT_FixedDrtn,RV_OK,TK_Complete,OCEC4020,"Preliminary survey works for Zones no. 11, 10 and 8",2983,,,0,50,0,50,50,0,0,0,,2012-12-18 13:00,2012-12-25 13:00,2013-05-15 16:00,2013-05-15 16:00,,2013-04-23 00:00,2013-04-23 00:00,,,2012-12-18 13:00,2012-12-25 13:00,,,,,PT_Normal,,,,,gvKI/WRT00uoEvD7AEkv9Q,57WQ+SUPTPqipm5dloIKkg,,,N,50,0,,,2013-06-23 13:01,2013-06-23 13:01,admin,admin
766,86731,1346,11512,1473,1,100,N,N,N,CP_Phys,TT_Task,DT_FixedDrtn,RV_OK,TK_Complete,OCEC9640,"Preliminary survey works for Zones no. 15, 14 and 13",2983,,,0,50,0,50,50,0,0,0,,2012-12-18 13:00,2012-12-25 13:00,2013-05-15 16:00,2013-05-15 16:00,,2013-04-23 00:00,2013-04-23 00:00,,,2012-12-18 13:00,2012-12-25 13:00,,,,,PT_Normal,,,,,P7IlztW3wkW4Mewoodogzg,Vd+iOc17TuqXgN5BXg/tcA,,,N,50,0,,,2013-06-23 13:01,2013-06-23 13:01,admin,admin
767,86732,1346,11512,1473,1,100,N,N,N,CP_Phys,TT_Task,DT_FixedDrtn,RV_OK,TK_Complete,OCEC9670,"Preliminary survey works for Zones no. 7, 6 and 5",2983,,,0,50,0,50,50,0,0,0,,2012-12-18 13:00,2012-12-25 13:00,2013-05-15 16:00,2013-05-15 16:00,,2013-04-23 00:00,2013-04-23 00:00,,,2012-12-18 13:00,2012-12-25 13:00,,,,,PT_Normal,,,,,Uapzjmuf/0mPbJX7BJsP7g,SANvaz2zS0yeWKOaC2iKxw,,,N,50,0,,,2013-06-23 13:01,2013-06-23 13:01,admin,admin
768,86733,1346,11512,1473,1,100,N,N,N,CP_Phys,TT_Task,DT_FixedDrtn,RV_OK,TK_Complete,OCEC13840,"Preliminary survey works for Zones no. 9, 4, 2 and 1",2983,,,0,20,0,20,50,0,0,0,,2012-12-18 13:00,2012-12-25 13:00,2013-11-17 16:00,2013-11-17 16:00,,2013-04-23 00:00,2013-04-23 00:00,,,2012-12-18 13:00,2012-12-25 13:00,,,,,PT_Normal,,,,,9JnAtrKjKEue5Zn46A4MLA,CkFWbWYrTM2JxzRVMXch9w,,,N,20,0,,,2013-06-23 13:01,2013-06-23 13:01,admin,admin
769,86734,1346,11512,1473,1,100,N,N,N,CP_Phys,TT_Task,DT_FixedDrtn,RV_OK,TK_Complete,A9300,Prepare and Submit Method Statment for Survey Works,,,,0,0,0,0,60,0,0,0,,2012-12-17 07:00,2012-12-24 17:00,2013-05-15 16:00,2013-05-15 16:00,,2013-04-23 00:00,2013-04-23 00:00,,,2012-12-17 07:00,2012-12-24 17:00,,,,,PT_Normal,,,,,sdL3Fb4e+keR9kutzaZEiw,illnW4ANvkKTuqC8RigpbQ,,,N,0,0,,,2013-06-23 13:01,2013-06-23 13:01,admin,admin
770,86735,1346,11512,1473,1,100,N,N,N,CP_Phys,TT_Task,DT_FixedDrtn,RV_OK,TK_Complete,A9310,Review and approval for Method Statment for Survey Works,,,,0,0,0,0,140,0,0,0,,2012-12-17 07:00,2013-01-05 17:00,2013-05-15 16:00,2013-05-15 16:00,,2013-04-23 00:00,2013-04-23 00:00,,,2012-12-17 07:00,2013-01-05 17:00,,,,,PT_Normal,,,,,J6lY4HV/Sk+Utpdsg6Dklw,uNBrs0JFG0yU6QyrUEhfIw,,,N,0,0,,,2013-06-23 13:01,2013-06-23 13:01,admin,admin
771,86736,1346,11500,1473,0,0,N,N,N,CP_Phys,TT_FinMile,DT_FixedDrtn,RV_OK,TK_NotStart,OCEC6681,Completion of road Works,,9,9,0,0,0,0,0,0,0,0,,,,2014-01-15 16:00,2014-01-15 16:00,,2014-01-15 07:00,2014-01-15 07:00,2014-01-15 07:00,2014-01-15 07:00,2014-01-15 07:00,2014-01-15 07:00,,2014-01-15 16:00,2014-01-15 16:00,,PT_Normal,,,,,Xpe44l6uiEW6XQB+4l+KXg,I5D879PuRfKe873QSyUrdg,,,N,0,0,,,2013-06-23 13:01,2013-06-23 13:01,admin,admin
772,86737,1346,11538,1473,1,0,N,N,N,CP_Phys,TT_Task,DT_FixedDrtn,RV_OK,TK_NotStart,OCEC9761,Completion of Road Works Phase 1,,9,0,8,0,7680,7680,8,0,0,0,,,,2014-01-15 08:00,2014-01-15 16:00,,2014-01-14 09:00,2014-01-15 07:00,2014-01-14 09:00,2014-01-15 07:00,2014-01-14 09:00,2014-01-15 07:00,,2014-01-15 08:00,2014-01-15 16:00,,PT_Normal,,,,,J0T5bS4onE6mo1HD3auNaQ,QKEHvNxmTB+SV3rf0cAhvw,,,N,0,0,,,2013-06-23 13:01,2013-06-23 13:01,admin,admin
773,86738,1346,11539,1473,1,100,N,N,N,CP_Phys,TT_Task,DT_FixedDrtn,RV_OK,TK_Complete,OCEC10181,Survey works,,,,0,0,0,0,30,0,0,0,,2013-01-16 16:00,2013-01-21 16:00,2013-08-13 16:00,2013-08-13 16:00,,2013-04-23 00:00,2013-04-23 00:00,,,2013-01-16 16:00,2013-01-21 16:00,,,,,PT_Normal,,,,,wqr7upmLqU6KiFI/h+OmrQ,dom+GZ+2TR+xU2jfkfXsmA,,,N,0,0,,,2013-06-23 13:01,2013-06-23 13:01,admin,admin
774,86739,1346,11564,1473,1,0,N,N,N,CP_Phys,TT_Task,DT_FixedDrtn,RV_OK,TK_NotStart,OCEC10901,Precast Concrete tile Paving 60 mm thick,2969,1099,0,60,0,1920,1920,60,60,0,60,,,,2013-12-03 16:00,2013-12-11 16:00,,2013-06-29 07:00,2013-07-06 17:00,2013-06-29 07:00,2013-07-06 17:00,2013-06-29 07:00,2013-07-06 17:00,,2013-12-03 16:00,2013-12-11 16:00,,PT_Normal,,,,,G+KiSYj1SUe3U7iO3tvz0g,N+NhgbM7TGiAGDoSkDKSqg,,,N,0,0,,,2013-06-23 13:01,2013-06-23 13:01,admin,admin
775,86740,1346,11564,1473,1,0,N,N,N,CP_Phys,TT_Task,DT_FixedDrtn,RV_OK,TK_NotStart,OCEC10921,Traffic Signs,2969,1059,0,60,0,780,780,60,120,0,120,,,,2013-12-11 16:00,2013-12-21 16:00,,2013-07-13 07:00,2013-07-20 17:00,2013-07-13 07:00,2013-07-20 17:00,2013-07-13 07:00,2013-07-20 17:00,,2013-12-11 16:00,2013-12-21 16:00,,PT_Normal,,,,,rnkDGH581kqmYX7bdgBdMA,hXZMro1VRiC+hjhBNjKNpQ,,,N,0,0,,,2013-06-23 13:01,2013-06-23 13:01,admin,admin
776,86741,1346,11564,1473,1,0,N,N,N,CP_Phys,TT_Task,DT_FixedDrtn,RV_OK,TK_NotStart,OCEC11081,Riprap Works,2969,1099,0,60,0,1200,1200,60,240,0,240,,,,2013-12-03 16:00,2013-12-11 16:00,,2013-06-29 07:00,2013-07-06 17:00,2013-06-29 07:00,2013-07-06 17:00,2013-06-29 07:00,2013-07-06 17:00,,2013-12-03 16:00,2013-12-11 16:00,,PT_Normal,,,,,Pig1kDnl60+vXzaN2WN11Q,Bg600W5DT7uDuBGjwO4Kow,,,N,0,0,,,2013-06-23 13:01,2013-06-23 13:01,admin,admin
777,86742,1346,11564,1473,1,0,N,N,N,CP_Phys,TT_Task,DT_FixedDrtn,RV_OK,TK_NotStart,OCEC18281,Gabions Works,2969,1099,0,60,0,1200,1200,60,240,0,240,,,,2013-12-03 16:00,2013-12-11 16:00,,2013-06-29 07:00,2013-07-06 17:00,2013-06-29 07:00,2013-07-06 17:00,2013-06-29 07:00,2013-07-06 17:00,,2013-12-03 16:00,2013-12-11 16:00,,PT_Normal,,,,,Kwh8GhTXOUqxjLm6hHq/RQ,MND/tUrPTXCh8sMjCO1UeQ,,,N,0,0,,,2013-06-23 13:01,2013-06-23 13:01,admin,admin
778,86743,1346,11564,1473,1,0,N,N,N,CP_Phys,TT_Task,DT_FixedDrtn,RV_OK,TK_NotStart,OCEC18291,Ditch Lining Works,2969,1099,0,60,0,960,960,60,0,0,0,,,,2013-12-03 16:00,2013-12-11 16:00,,2013-06-29 07:00,2013-07-06 17:00,2013-06-29 07:00,2013-07-06 17:00,2013-06-29 07:00,2013-07-06 17:00,,2013-12-03 16:00,2013-12-11 16:00,,PT_Normal,,,,,JZAIhNF25E+qtF0aRZN3Pg,Wwp/VqPIR6CuVylf+nSloA,,,N,0,0,,,2013-06-23 13:01,2013-06-23 13:01,admin,admin
779,86744,1346,11564,1473,1,0,N,N,N,CP_Phys,TT_Task,DT_FixedDrtn,RV_OK,TK_NotStart,OCEC18301,Coastal Protection Works,2969,1099,420,250,0,5000,5000,250,1000,0,1000,,,,2013-12-11 16:00,2014-01-15 16:00,,2013-07-07 07:00,2013-08-12 17:00,2013-07-07 07:00,2013-08-12 17:00,2013-07-07 07:00,2013-08-12 17:00,,2013-12-11 16:00,2014-01-15 16:00,,PT_Normal,,,,,F5BcUdI/GUGEexxLd0PGCA,ahVICyeeTqmqbzioDxP8dw,,,N,0,0,,,2013-06-23 13:01,2013-06-23 13:01,admin,admin
780,86745,1346,11564,1473,1,0,N,N,N,CP_Phys,TT_Task,DT_FixedDrtn,RV_OK,TK_NotStart,OCEC18311,Interlok Tiles,2969,1159,480,250,0,4000,4000,250,0,0,0,,,,2013-12-11 16:00,2014-01-15 16:00,,2013-06-29 07:00,2013-07-31 17:00,2013-06-29 07:00,2013-07-31 17:00,2013-06-29 07:00,2013-07-31 17:00,,2013-12-11 16:00,2014-01-15 16:00,,PT_Normal,,,,,bHltAlNTCUuZH3yCecBT0w,9Q5nJQzMTvWodQCOtK+UVw,,,N,0,0,,,2013-06-23 13:01,2013-06-23 13:01,admin,admin
781,86746,1346,11564,1473,1,0,N,N,N,CP_Phys,TT_Task,DT_FixedDrtn,RV_OK,TK_NotStart,OCEC18321,Road Marking and Studs,2969,1059,380,250,0,4000,4000,250,0,0,0,,,,2013-12-11 16:00,2014-01-15 16:00,,2013-07-13 07:00,2013-08-18 17:00,2013-07-13 07:00,2013-08-18 17:00,2013-07-13 07:00,2013-08-18 17:00,,2013-12-11 16:00,2014-01-15 16:00,,PT_Normal,,,,,iheqjcaYv0GNNyH6OBjSnw,nT/UFPHbR6eeYajol0DYFg,,,N,0,0,,,2013-06-23 13:01,2013-06-23 13:01,admin,admin
782,86747,1346,11564,1473,1,0,N,N,N,CP_Phys,TT_Task,DT_FixedDrtn,RV_OK,TK_NotStart,A15077,Prepare and Submit Method Statment for Road Finishing Works,,1099,0,120,0,0,0,120,0,0,0,,,,2013-10-26 16:00,2013-11-11 16:00,,2013-05-22 07:00,2013-06-08 17:00,2013-05-22 07:00,2013-06-08 17:00,2013-05-22 07:00,2013-06-08 17:00,,2013-10-26 16:00,2013-11-11 16:00,,PT_Normal,,,,,o22+ydzZ/U+47/Ef0pm21g,eonXASIIRKSBZfiPaU1JpQ,,,N,0,0,,,2013-06-23 13:01,2013-06-23 13:01,admin,admin
783,86748,1346,11564,1473,1,0,N,N,N,CP_Phys,TT_Task,DT_FixedDrtn,RV_OK,TK_NotStart,A15078,Review and approval for Method Statment for Road Finishing Works,,1099,0,140,0,0,0,140,0,0,0,,,,2013-11-11 16:00,2013-12-03 16:00,,2013-06-09 07:00,2013-06-26 17:00,2013-06-09 07:00,2013-06-26 17:00,2013-06-09 07:00,2013-06-26 17:00,,2013-11-11 16:00,2013-12-03 16:00,,PT_Normal,,,,,jRKX40dl6UmG1NaLnyqrFg,L5n+CwL5RuaSJpCQ85G4dw,,,N,0,0,,,2013-06-23 13:01,2013-06-23 13:01,admin,admin
784,86749,1346,11564,1473,1,0,N,N,N,CP_Phys,TT_Task,DT_FixedDrtn,RV_OK,TK_NotStart,B2611,MIR for Ductile Iron Manhole Cover,,1309,210,20,0,0,0,20,0,0,0,,,,2013-12-09 16:00,2013-12-11 16:00,,2013-06-04 07:00,2013-06-05 17:00,2013-06-04 07:00,2013-06-05 17:00,2013-06-04 07:00,2013-06-05 17:00,,2013-12-09 16:00,2013-12-11 16:00,,PT_Normal,,,,,H/+tehhD80CXYj7dOl347Q,asBkFdFuSBW5ZwQNHS0ihw,,,N,0,0,,,2013-06-23 13:01,2013-06-23 13:01,admin,admin
785,86750,1346,11564,1474,1,0,N,N,N,CP_Phys,TT_Task,DT_FixedDrtn,RV_OK,TK_NotStart,B2631,Procurment  for Ductile Iron Manhole Cover,,1889,0,120,0,0,0,120,0,0,0,,,,2013-11-27 16:00,2013-12-09 16:00,,2013-05-23 07:00,2013-06-03 17:00,2013-05-23 07:00,2013-06-03 17:00,2013-05-23 07:00,2013-06-03 17:00,,2013-11-27 16:00,2013-12-09 16:00,,PT_Normal,,,,,K1qjFlljpkKDWnNYHgqkWg,HZw0QTQQQVOknZ1whyTEOA,,,N,0,0,,,2013-06-23 13:01,2013-06-23 13:01,admin,admin
786,86751,1346,11564,1473,1,0,N,N,N,CP_Phys,TT_Task,DT_FixedDrtn,RV_OK,TK_NotStart,B2671,MIR for Road Marking Material (Thermo Plastic),,1229,170,20,0,0,0,20,0,0,0,,,,2013-12-09 16:00,2013-12-11 16:00,,2013-06-16 07:00,2013-06-17 17:00,2013-06-16 07:00,2013-06-17 17:00,2013-06-16 07:00,2013-06-17 17:00,,2013-12-09 16:00,2013-12-11 16:00,,PT_Normal,,,,,o5wJGhZJT0GOSk4v8M2X8Q,eygNeevCTFimRSH2HlMwNA,,,N,0,0,,,2013-06-23 13:01,2013-06-23 13:01,admin,admin
787,86752,1346,11564,1473,1,0,N,N,N,CP_Phys,TT_Task,DT_FixedDrtn,RV_OK,TK_NotStart,B2681,MAR for Road Marking Material (Thermo Plastic),,1229,0,220,0,0,0,220,0,0,0,,,,2013-10-26 16:00,2013-11-27 16:00,,2013-05-05 07:00,2013-06-03 17:00,2013-05-05 07:00,2013-06-03 17:00,2013-05-05 07:00,2013-06-03 17:00,,2013-10-26 16:00,2013-11-27 16:00,,PT_Normal,,,,,NJdSJ8DR50ms3HUn0lieXw,bLyOFUFlQZKZEkYdNIQNlA,,,N,0,0,,,2013-06-23 13:01,2013-06-23 13:01,admin,admin
788,86753,1346,11564,1474,1,0,N,N,N,CP_Phys,TT_Task,DT_FixedDrtn,RV_OK,TK_NotStart,B2691,Procurment  for Road Marking Material (Thermo Plastic),,1769,0,120,0,0,0,120,0,0,0,,,,2013-11-27 16:00,2013-12-09 16:00,,2013-06-04 07:00,2013-06-15 17:00,2013-06-04 07:00,2013-06-15 17:00,2013-06-04 07:00,2013-06-15 17:00,,2013-11-27 16:00,2013-12-09 16:00,,PT_Normal,,,,,/+B4YUNJcUWzDlybJ61Tsg,UaoJu3I4Q8Oi1fV3vehOQg,,,N,0,0,,,2013-06-23 13:01,2013-06-23 13:01,admin,admin
789,86754,1346,11564,1473,1,0,N,N,N,CP_Phys,TT_Task,DT_FixedDrtn,RV_OK,TK_NotStart,B2701,MIR for Reflecting Road Stud,,1229,170,20,0,0,0,20,0,0,0,,,,2013-12-09 16:00,2013-12-11 16:00,,2013-06-16 07:00,2013-06-17 17:00,2013-06-16 07:00,2013-06-17 17:00,2013-06-16 07:00,2013-06-17 17:00,,2013-12-09 16:00,2013-12-11 16:00,,PT_Normal,,,,,u2Xa/v7mEkqYpUFMFoUbew,P7W7O7MNRxKVKnsuFVmuoQ,,,N,0,0,,,2013-06-23 13:01,2013-06-23 13:01,admin,admin
790,86755,1346,11564,1473,1,0,N,N,N,CP_Phys,TT_Task,DT_FixedDrtn,RV_OK,TK_NotStart,B2711,MAR for Reflecting Road Stud,,1229,0,220,0,0,0,220,0,0,0,,,,2013-10-26 16:00,2013-11-27 16:00,,2013-05-05 07:00,2013-06-03 17:00,2013-05-05 07:00,2013-06-03 17:00,2013-05-05 07:00,2013-06-03 17:00,,2013-10-26 16:00,2013-11-27 16:00,,PT_Normal,,,,,04ZqriYEKk6oatixL3aVrw,XiaGiFcTT7SZw08SfWNrAQ,,,N,0,0,,,2013-06-23 13:01,2013-06-23 13:01,admin,admin
791,86756,1346,11564,1474,1,0,N,N,N,CP_Phys,TT_Task,DT_FixedDrtn,RV_OK,TK_NotStart,B2721,Procurment  for Reflecting Road Stud,,1769,0,120,0,0,0,120,0,0,0,,,,2013-11-27 16:00,2013-12-09 16:00,,2013-06-04 07:00,2013-06-15 17:00,2013-06-04 07:00,2013-06-15 17:00,2013-06-04 07:00,2013-06-15 17:00,,2013-11-27 16:00,2013-12-09 16:00,,PT_Normal,,,,,xcct54sSb0i9k5zZXypN5w,/siaSyIwSTev7e0j5/2E0w,,,N,0,0,,,2013-06-23 13:01,2013-06-23 13:01,admin,admin
792,86757,1346,11564,1473,1,0,N,N,N,CP_Phys,TT_Task,DT_FixedDrtn,RV_OK,TK_NotStart,B2731,MIR for Highway Signs,,1199,140,20,0,0,0,20,0,0,0,,,,2013-12-09 16:00,2013-12-11 16:00,,2013-06-19 07:00,2013-06-22 17:00,2013-06-19 07:00,2013-06-22 17:00,2013-06-19 07:00,2013-06-22 17:00,,2013-12-09 16:00,2013-12-11 16:00,,PT_Normal,,,,,uvrKt/5vRUGKQ3FAXNf+2w,DGrzT+OoSNKdHpdO+5+I7A,,,N,0,0,,,2013-06-23 13:01,2013-06-23 13:01,admin,admin
793,86758,1346,11564,1473,1,0,N,N,N,CP_Phys,TT_Task,DT_FixedDrtn,RV_OK,TK_NotStart,B2741,MAR for Highway Signs,,1199,0,220,0,0,0,220,0,0,0,,,,2013-10-21 16:00,2013-11-24 16:00,,2013-05-05 07:00,2013-06-03 17:00,2013-05-05 07:00,2013-06-03 17:00,2013-05-05 07:00,2013-06-03 17:00,,2013-10-21 16:00,2013-11-24 16:00,,PT_Normal,,,,,cmP5oh+MVUu+j1UeRNHpFw,s4QM/PXxTB++PD9wDOSEZA,,,N,0,0,,,2013-06-23 13:01,2013-06-23 13:01,admin,admin
794,86759,1346,11564,1474,1,0,N,N,N,CP_Phys,TT_Task,DT_FixedDrtn,RV_OK,TK_NotStart,B2751,Procurment  for Highway Signs,,1739,0,150,0,0,0,150,0,0,0,,,,2013-11-24 16:00,2013-12-09 16:00,,2013-06-04 07:00,2013-06-18 17:00,2013-06-04 07:00,2013-06-18 17:00,2013-06-04 07:00,2013-06-18 17:00,,2013-11-24 16:00,2013-12-09 16:00,,PT_Normal,,,,,fFsvVmaMA0ywH4M2DqCHtg,eU04eISoRuC9yip9LySgzA,,,N,0,0,,,2013-06-23 13:01,2013-06-23 13:01,admin,admin
795,86760,1346,11564,1473,1,0,N,N,N,CP_Phys,TT_Task,DT_FixedDrtn,RV_OK,TK_NotStart,B2761,MIR for Sign Post,,1199,140,20,0,0,0,20,0,0,0,,,,2013-12-09 16:00,2013-12-11 16:00,,2013-06-19 07:00,2013-06-22 17:00,2013-06-19 07:00,2013-06-22 17:00,2013-06-19 07:00,2013-06-22 17:00,,2013-12-09 16:00,2013-12-11 16:00,,PT_Normal,,,,,SSQ93DokmkeAFTYnNHHDoA,b+5ohJSjSJiY8ebB4q8ZTA,,,N,0,0,,,2013-06-23 13:01,2013-06-23 13:01,admin,admin
796,86761,1346,11564,1473,1,0,N,N,N,CP_Phys,TT_Task,DT_FixedDrtn,RV_OK,TK_NotStart,B2771,MAR for Sign Post,,1199,0,220,0,0,0,220,0,0,0,,,,2013-10-21 16:00,2013-11-24 16:00,,2013-05-05 07:00,2013-06-03 17:00,2013-05-05 07:00,2013-06-03 17:00,2013-05-05 07:00,2013-06-03 17:00,,2013-10-21 16:00,2013-11-24 16:00,,PT_Normal,,,,,aJoTmEyidkS9bn++WQyy6Q,bP+oPd0xTzeSo7E+ZdK8dg,,,N,0,0,,,2013-06-23 13:01,2013-06-23 13:01,admin,admin
797,86762,1346,11564,1474,1,0,N,N,N,CP_Phys,TT_Task,DT_FixedDrtn,RV_OK,TK_NotStart,B2781,Procurment  for Sign Post,,1739,0,150,0,0,0,150,0,0,0,,,,2013-11-24 16:00,2013-12-09 16:00,,2013-06-04 07:00,2013-06-18 17:00,2013-06-04 07:00,2013-06-18 17:00,2013-06-04 07:00,2013-06-18 17:00,,2013-11-24 16:00,2013-12-09 16:00,,PT_Normal,,,,,iclzNb/YRkCEeGxWy+PjkA,cfn1ETjQSguLofncbAbp9w,,,N,0,0,,,2013-06-23 13:01,2013-06-23 13:01,admin,admin
798,86763,1346,11564,1473,1,0,N,N,N,CP_Phys,TT_Task,DT_FixedDrtn,RV_OK,TK_NotStart,B2881,MIR for Foundation Boult,,1059,0,20,0,0,0,20,0,0,0,,,,2013-12-09 16:00,2013-12-11 16:00,,2013-07-09 07:00,2013-07-10 17:00,2013-07-09 07:00,2013-07-10 17:00,2013-07-09 07:00,2013-07-10 17:00,,2013-12-09 16:00,2013-12-11 16:00,,PT_Normal,,,,,PQTyVqIeU0SwYtp+H98GPw,B3wX8f10QhWmY9zOREwYpw,,,N,0,0,,,2013-06-23 13:01,2013-06-23 13:01,admin,admin
799,86764,1346,11564,1473,1,0,N,N,N,CP_Phys,TT_Task,DT_FixedDrtn,RV_OK,TK_NotStart,B2891,MAR for Foundation Boult,,1059,0,220,0,0,0,220,0,0,0,,,,2013-10-21 16:00,2013-11-24 16:00,,2013-05-25 07:00,2013-06-23 17:00,2013-05-25 07:00,2013-06-23 17:00,2013-05-25 07:00,2013-06-23 17:00,,2013-10-21 16:00,2013-11-24 16:00,,PT_Normal,,,,,2Svg/Widi0WF8YodYG+CNw,/+fL1tx5T0CksbqGjO/Y9Q,,,N,0,0,,,2013-06-23 13:01,2013-06-23 13:01,admin,admin
800,86765,1346,11564,1474,1,0,N,N,N,CP_Phys,TT_Task,DT_FixedDrtn,RV_OK,TK_NotStart,B2901,Procurment  for Foundation Boult,,1539,0,150,0,0,0,150,0,0,0,,,,2013-11-24 16:00,2013-12-09 16:00,,2013-06-24 07:00,2013-07-08 17:00,2013-06-24 07:00,2013-07-08 17:00,2013-06-24 07:00,2013-07-08 17:00,,2013-11-24 16:00,2013-12-09 16:00,,PT_Normal,,,,,U3Hby/8ct0C8LRdqOezCsA,J/xzFMpNTKSQWEfnO0tl1A,,,N,0,0,,,2013-06-23 13:01,2013-06-23 13:01,admin,admin
801,86766,1346,11564,1473,1,0,N,N,N,CP_Phys,TT_Task,DT_FixedDrtn,RV_OK,TK_NotStart,B2941,MIR for Riprap Stone,,1139,40,20,0,0,0,20,0,0,0,,,,2013-12-01 16:00,2013-12-03 16:00,,2013-06-19 07:00,2013-06-22 17:00,2013-06-19 07:00,2013-06-22 17:00,2013-06-19 07:00,2013-06-22 17:00,,2013-12-01 16:00,2013-12-03 16:00,,PT_Normal,,,,,Ml/bHWUgvESnpkbtT2SJ7A,cS9rZExtTWC2fLBm4WrnsA,,,N,0,0,,,2013-06-23 13:01,2013-06-23 13:01,admin,admin
802,86767,1346,11564,1473,1,0,N,N,N,CP_Phys,TT_Task,DT_FixedDrtn,RV_OK,TK_NotStart,B2951,MAR for Riprap Stone,,1159,0,220,0,0,0,220,0,0,0,,,,2013-10-15 16:00,2013-11-16 16:00,,2013-05-05 07:00,2013-06-03 17:00,2013-05-05 07:00,2013-06-03 17:00,2013-05-05 07:00,2013-06-03 17:00,,2013-10-15 16:00,2013-11-16 16:00,,PT_Normal,,,,,RYGwb2C2S02DDFhY/NLX8w,KERPPzK8R5yi9gKvR2Y7PA,,,N,0,0,,,2013-06-23 13:01,2013-06-23 13:01,admin,admin
803,86768,1346,11564,1474,1,0,N,N,N,CP_Phys,TT_Task,DT_FixedDrtn,RV_OK,TK_NotStart,B2961,Procurment  for Riprap Stone,,1659,0,150,0,0,0,150,0,0,0,,,,2013-11-16 16:00,2013-12-01 16:00,,2013-06-04 07:00,2013-06-18 17:00,2013-06-04 07:00,2013-06-18 17:00,2013-06-04 07:00,2013-06-18 17:00,,2013-11-16 16:00,2013-12-01 16:00,,PT_Normal,,,,,eO5Q06ldWUuHAdW2qHctcg,DaTtDm1iSseJBW7XgmVEwQ,,,N,0,0,,,2013-06-23 13:01,2013-06-23 13:01,admin,admin
804,86769,1346,11564,1473,1,0,N,N,N,CP_Phys,TT_Task,DT_FixedDrtn,RV_OK,TK_NotStart,B2971,MIR for Mortar - Hydrated Lime Base,,1139,40,20,0,0,0,20,0,0,0,,,,2013-12-01 16:00,2013-12-03 16:00,,2013-06-19 07:00,2013-06-22 17:00,2013-06-19 07:00,2013-06-22 17:00,2013-06-19 07:00,2013-06-22 17:00,,2013-12-01 16:00,2013-12-03 16:00,,PT_Normal,,,,,f8DJdIYCWUudscJ4x+0ALw,1634ra5wTPekqylgN/Rzmg,,,N,0,0,,,2013-06-23 13:01,2013-06-23 13:01,admin,admin
805,86770,1346,11564,1473,1,0,N,N,N,CP_Phys,TT_Task,DT_FixedDrtn,RV_OK,TK_NotStart,B2981,MAR for Mortar - Hydrated Lime Base,,1159,0,220,0,0,0,220,0,0,0,,,,2013-10-15 16:00,2013-11-16 16:00,,2013-05-05 07:00,2013-06-03 17:00,2013-05-05 07:00,2013-06-03 17:00,2013-05-05 07:00,2013-06-03 17:00,,2013-10-15 16:00,2013-11-16 16:00,,PT_Normal,,,,,q78UqcR4IEGSH3vyuIHaHg,KgJcClx+Rcq6zu90xtIFAA,,,N,0,0,,,2013-06-23 13:01,2013-06-23 13:01,admin,admin
806,86771,1346,11564,1474,1,0,N,N,N,CP_Phys,TT_Task,DT_FixedDrtn,RV_OK,TK_NotStart,B2991,Procurment  for Mortar - Hydrated Lime Base,,1659,0,150,0,0,0,150,0,0,0,,,,2013-11-16 16:00,2013-12-01 16:00,,2013-06-04 07:00,2013-06-18 17:00,2013-06-04 07:00,2013-06-18 17:00,2013-06-04 07:00,2013-06-18 17:00,,2013-11-16 16:00,2013-12-01 16:00,,PT_Normal,,,,,PqfxpK8glEqNMwxjK7nv1w,reh3+9pdRyq8MFzRtDOUXQ,,,N,0,0,,,2013-06-23 13:01,2013-06-23 13:01,admin,admin
807,86772,1346,11564,1473,1,0,N,N,N,CP_Phys,TT_Task,DT_FixedDrtn,RV_OK,TK_NotStart,B3001,MIR for Filter Membrane,,1139,40,20,0,0,0,20,0,0,0,,,,2013-12-01 16:00,2013-12-03 16:00,,2013-06-19 07:00,2013-06-22 17:00,2013-06-19 07:00,2013-06-22 17:00,2013-06-19 07:00,2013-06-22 17:00,,2013-12-01 16:00,2013-12-03 16:00,,PT_Normal,,,,,OI3SeGI40EK4Z6C8abU7LQ,fu9QEwvyQc2JHrlOXfI2bg,,,N,0,0,,,2013-06-23 13:01,2013-06-23 13:01,admin,admin
808,86773,1346,11564,1473,1,0,N,N,N,CP_Phys,TT_Task,DT_FixedDrtn,RV_OK,TK_NotStart,B3011,MAR for Filter Membrane,,1159,0,220,0,0,0,220,0,0,0,,,,2013-10-15 16:00,2013-11-16 16:00,,2013-05-05 07:00,2013-06-03 17:00,2013-05-05 07:00,2013-06-03 17:00,2013-05-05 07:00,2013-06-03 17:00,,2013-10-15 16:00,2013-11-16 16:00,,PT_Normal,,,,,UKURI1q+KUGLVW8hf14+Iw,ryzzOX6TRN+ACuPE8+ANIg,,,N,0,0,,,2013-06-23 13:01,2013-06-23 13:01,admin,admin
809,86774,1346,11564,1474,1,0,N,N,N,CP_Phys,TT_Task,DT_FixedDrtn,RV_OK,TK_NotStart,B3021,Procurment  for Filter Membrane,,1659,0,150,0,0,0,150,0,0,0,,,,2013-11-16 16:00,2013-12-01 16:00,,2013-06-04 07:00,2013-06-18 17:00,2013-06-04 07:00,2013-06-18 17:00,2013-06-04 07:00,2013-06-18 17:00,,2013-11-16 16:00,2013-12-01 16:00,,PT_Normal,,,,,XBe6+8KSXUmJcmfMxycC5A,fF8iOHYDSGO0P6mkKvL6SQ,,,N,0,0,,,2013-06-23 13:01,2013-06-23 13:01,admin,admin
810,86775,1346,11564,1473,1,0,N,N,N,CP_Phys,TT_Task,DT_FixedDrtn,RV_OK,TK_NotStart,B3031,MIR for Poly Sulphate Sealant,,1469,370,20,0,0,0,20,0,0,0,,,,2013-12-01 16:00,2013-12-03 16:00,,2013-05-05 07:00,2013-05-06 17:00,2013-05-05 07:00,2013-05-06 17:00,2013-05-05 07:00,2013-05-06 17:00,,2013-12-01 16:00,2013-12-03 16:00,,PT_Normal,,,,,/9Ce5asCREG636vLCcDTiA,eYYm0xJlRTaso63bkYoCJw,,,N,0,0,,,2013-06-23 13:01,2013-06-23 13:01,admin,admin
811,86776,1346,11564,1473,1,100,N,N,N,CP_Phys,TT_Task,DT_FixedDrtn,RV_OK,TK_Complete,B3041,MAR for Poly Sulphate Sealant,,,,0,0,0,0,220,0,0,0,,2013-02-10 00:00,2013-03-10 00:00,2013-11-19 16:00,2013-11-19 16:00,,2013-04-23 00:00,2013-04-23 00:00,,,2013-04-23 16:00,2013-05-25 16:00,,,,,PT_Normal,,,,,90gxA9FA60ub8mwVpgVb5Q,t7EL+hAGQhGKTxU1pjQf5w,,,N,0,0,,,2013-06-23 13:01,2013-06-23 13:01,admin,admin
812,86777,1346,11564,1474,1,0,N,N,N,CP_Phys,TT_Task,DT_FixedDrtn,RV_OK,TK_NotStart,B3051,Procurment  for Poly Sulphate Sealant,,2109,0,120,0,0,0,120,0,0,0,,,,2013-11-19 16:00,2013-12-01 16:00,,2013-04-23 07:00,2013-05-04 17:00,2013-04-23 07:00,2013-05-04 17:00,2013-04-23 07:00,2013-05-04 17:00,,2013-11-19 16:00,2013-12-01 16:00,,PT_Normal,,,,,XVWHDsib5ky27xvhzhinHg,K3bd4n66SO2dIFMzWwhQpQ,,,N,0,0,,,2013-06-23 13:01,2013-06-23 13:01,admin,admin
813,86778,1346,11564,1473,1,0,N,N,N,CP_Phys,TT_Task,DT_FixedDrtn,RV_OK,TK_NotStart,B3061,MIR for Joint Filler Strips,,1169,70,20,0,0,0,20,0,0,0,,,,2013-12-01 16:00,2013-12-03 16:00,,2013-06-16 07:00,2013-06-17 17:00,2013-06-16 07:00,2013-06-17 17:00,2013-06-16 07:00,2013-06-17 17:00,,2013-12-01 16:00,2013-12-03 16:00,,PT_Normal,,,,,/enFBFj/gU6VZV5CZpzaBg,09CycAwlSAi+YMz3dNfC8Q,,,N,0,0,,,2013-06-23 13:01,2013-06-23 13:01,admin,admin
814,86779,1346,11564,1473,1,80,N,N,N,CP_Phys,TT_Task,DT_FixedDrtn,RV_OK,TK_Active,B3071,MAR for Joint Filler Strips,,1180,0,300,0,0,0,220,0,0,0,,2013-04-01 00:00,,2013-10-08 07:00,2013-11-18 17:00,,2013-04-23 07:00,2013-06-03 17:00,2013-04-23 07:00,2013-06-03 17:00,2013-05-01 16:00,2013-06-02 16:00,,2013-10-08 07:00,2013-11-18 17:00,,PT_Normal,,,,,6zNYoIk1KkeA6dF/ujSJ/Q,vUR1/lC/QOKsXI9ucFFCjg,,,N,0,0,,,2013-06-23 13:01,2013-06-23 13:01,admin,admin
815,86780,1346,11564,1474,1,0,N,N,N,CP_Phys,TT_Task,DT_FixedDrtn,RV_OK,TK_NotStart,B3081,Procurment  for Joint Filler Strips,,1689,0,120,0,0,0,120,0,0,0,,,,2013-11-19 16:00,2013-12-01 16:00,,2013-06-04 07:00,2013-06-15 17:00,2013-06-04 07:00,2013-06-15 17:00,2013-06-04 07:00,2013-06-15 17:00,,2013-11-19 16:00,2013-12-01 16:00,,PT_Normal,,,,,y7UFIkOxQ06TLE7wfUfGNA,ViXMcwWsQqSwbViOdfC+YA,,,N,0,0,,,2013-06-23 13:01,2013-06-23 13:01,admin,admin
816,86781,1346,11564,1473,1,0,N,N,N,CP_Phys,TT_Task,DT_FixedDrtn,RV_OK,TK_NotStart,B3211,MIR for Bedded Sand,,1239,80,20,0,0,0,20,0,0,0,,,,2013-12-09 16:00,2013-12-11 16:00,,2013-06-15 07:00,2013-06-16 17:00,2013-06-15 07:00,2013-06-16 17:00,2013-06-15 07:00,2013-06-16 17:00,,2013-12-09 16:00,2013-12-11 16:00,,PT_Normal,,,,,sLGe6PmlBke7i4Ya159/aA,zfq+my9EQ5291rKna+BhXQ,,,N,0,0,,,2013-06-23 13:01,2013-06-23 13:01,admin,admin
817,86782,1346,11564,1473,1,0,N,N,N,CP_Phys,TT_Task,DT_FixedDrtn,RV_OK,TK_NotStart,B3221,MAR for Bedded Sand,,1230,0,220,0,0,0,220,0,0,0,,,,2013-10-27 07:00,2013-11-27 17:00,,2013-05-05 07:00,2013-06-03 17:00,2013-05-05 07:00,2013-06-03 17:00,2013-05-05 07:00,2013-06-03 17:00,,2013-10-27 07:00,2013-11-27 17:00,,PT_Normal,,,,,zItTfCZS80OIQ2KxmTddEg,CnnKzl2DQJKvkc95xnpuHA,,,N,0,0,,,2013-06-23 13:01,2013-06-23 13:01,admin,admin
818,86783,1346,11564,1474,1,0,N,N,N,CP_Phys,TT_Task,DT_FixedDrtn,RV_OK,TK_NotStart,B3231,Procurment  for Bedded Sand,,1789,10,100,0,0,0,100,0,0,0,,,,2013-11-29 16:00,2013-12-09 16:00,,2013-06-04 07:00,2013-06-13 17:00,2013-06-04 07:00,2013-06-13 17:00,2013-06-04 07:00,2013-06-13 17:00,,2013-11-29 16:00,2013-12-09 16:00,,PT_Normal,,,,,76A7y4U4lUGBRfHRodAqsg,/aTi3wTYTSadNJhx7XlfFQ,,,N,0,0,,,2013-06-23 13:01,2013-06-23 13:01,admin,admin
819,86784,1346,11564,1474,1,0,N,N,N,CP_Phys,TT_Task,DT_FixedDrtn,RV_OK,TK_NotStart,B3691,MAR  for Ductile Iron Manhole Cover,,1889,0,220,0,0,0,220,0,0,0,,,,2013-11-05 16:00,2013-11-27 16:00,,2013-05-01 07:00,2013-05-22 17:00,2013-05-01 07:00,2013-05-22 17:00,2013-05-01 07:00,2013-05-22 17:00,,2013-11-05 16:00,2013-11-27 16:00,,PT_Normal,,,,,XcFTlrXn3Uivz0hma29BXQ,3TZuZ1QwTLmmzbgG2kBa9g,,,N,0,0,,,2013-06-23 13:01,2013-06-23 13:01,admin,admin
820,86785,1346,11564,1473,1,100,N,N,N,CP_Phys,TT_Task,DT_FixedDrtn,RV_OK,TK_Complete,B3042,Prepartion & Submission for Poly Sulphate Sealant,,,,0,0,0,0,80,0,0,0,,2013-01-13 00:00,2013-01-23 00:00,2013-11-19 16:00,2013-11-19 16:00,,2013-04-23 00:00,2013-04-23 00:00,,,2013-04-23 16:00,2013-05-05 16:00,,,,,PT_Normal,,,,,r8KedGXWC0eCWMHcT5KUdg,xm8x0grY50mNVFde2ZJupw,,,N,0,0,,,2013-06-23 13:01,2013-06-23 13:01,admin,admin
821,86786,1346,11564,1473,1,100,N,N,N,CP_Phys,TT_Task,DT_FixedDrtn,RV_OK,TK_Complete,B3072,Prepartion & Submission for Joint Filler Strips,,,,0,0,0,0,80,0,0,0,,2013-03-23 00:00,2013-04-01 00:00,2013-10-08 07:00,2013-10-08 07:00,,2013-04-23 00:00,2013-04-23 00:00,,,2013-05-01 16:00,2013-05-13 16:00,,,,,PT_Normal,,,,,nM3SJDh+AUWPzgKlnibyQg,vwgX6hG2NUqYIuFt+urYmw,,,N,0,0,,,2013-06-23 13:01,2013-06-23 13:01,admin,admin
822,86787,1346,11564,1473,1,0,N,N,N,CP_Phys,TT_Task,DT_FixedDrtn,RV_OK,TK_NotStart,B2682,Prepartion & Submission for Road Marking Material (Thermo Plastic),,1229,0,80,0,0,0,80,0,0,0,,,,2013-10-14 16:00,2013-10-26 16:00,,2013-04-23 07:00,2013-05-04 17:00,2013-04-23 07:00,2013-05-04 17:00,2013-04-23 07:00,2013-05-04 17:00,,2013-10-14 16:00,2013-10-26 16:00,,PT_Normal,,,,,bTef01lhTE697A2k6EU64w,0xnrCw6QqEySABkeM3W7ng,,,N,0,0,,,2013-06-23 13:01,2013-06-23 13:01,admin,admin
823,86788,1346,11564,1473,1,0,N,N,N,CP_Phys,TT_Task,DT_FixedDrtn,RV_OK,TK_NotStart,B2712,Prepartion & Submission for Reflecting Road Stud,,1229,0,80,0,0,0,80,0,0,0,,,,2013-10-14 16:00,2013-10-26 16:00,,2013-04-23 07:00,2013-05-04 17:00,2013-04-23 07:00,2013-05-04 17:00,2013-04-23 07:00,2013-05-04 17:00,,2013-10-14 16:00,2013-10-26 16:00,,PT_Normal,,,,,y/Y+D/WzrU6Cl6AMicwT8Q,9q1XgUPWcU+WD8kTmv/0IA,,,N,0,0,,,2013-06-23 13:01,2013-06-23 13:01,admin,admin
824,86789,1346,11564,1473,1,0,N,N,N,CP_Phys,TT_Task,DT_FixedDrtn,RV_OK,TK_NotStart,B2742,Prepartion & Submission for Highway Signs,,1199,0,80,0,0,0,80,0,0,0,,,,2013-10-09 16:00,2013-10-21 16:00,,2013-04-23 07:00,2013-05-04 17:00,2013-04-23 07:00,2013-05-04 17:00,2013-04-23 07:00,2013-05-04 17:00,,2013-10-09 16:00,2013-10-21 16:00,,PT_Normal,,,,,VWBs/KtVhUizFlUj7EapdA,asOgzP+IT0yCw1GzyF4y2Q,,,N,0,0,,,2013-06-23 13:01,2013-06-23 13:01,admin,admin
825,86790,1346,11564,1473,1,0,N,N,N,CP_Phys,TT_Task,DT_FixedDrtn,RV_OK,TK_NotStart,B2772,Prepartion & Submission for Sign Post,,1199,0,80,0,0,0,80,0,0,0,,,,2013-10-09 16:00,2013-10-21 16:00,,2013-04-23 07:00,2013-05-04 17:00,2013-04-23 07:00,2013-05-04 17:00,2013-04-23 07:00,2013-05-04 17:00,,2013-10-09 16:00,2013-10-21 16:00,,PT_Normal,,,,,Z82+w7XpLkGJf15zje31Xg,k9puPhGIV0ep5LDT+vETxQ,,,N,0,0,,,2013-06-23 13:01,2013-06-23 13:01,admin,admin
826,86791,1346,11564,1473,1,0,N,N,N,CP_Phys,TT_Task,DT_FixedDrtn,RV_OK,TK_NotStart,B2892,MAR for Foundation Boult,,1059,0,220,0,0,0,220,0,0,0,,,,2013-09-21 16:00,2013-10-21 16:00,,2013-04-23 07:00,2013-05-22 17:00,2013-04-23 07:00,2013-05-22 17:00,2013-04-23 07:00,2013-05-22 17:00,,2013-09-21 16:00,2013-10-21 16:00,,PT_Normal,,,,,A6j/N244fUeKqaOVmdQgkg,5kPsAR3/HUGHQBYez0eEHQ,,,N,0,0,,,2013-06-23 13:01,2013-06-23 13:01,admin,admin
827,86792,1346,11564,1473,1,0,N,N,N,CP_Phys,TT_Task,DT_FixedDrtn,RV_OK,TK_NotStart,B2952,Prepartion & Submission for Riprap Stone,,1159,0,80,0,0,0,80,0,0,0,,,,2013-10-05 16:00,2013-10-15 16:00,,2013-04-23 07:00,2013-05-04 17:00,2013-04-23 07:00,2013-05-04 17:00,2013-04-23 07:00,2013-05-04 17:00,,2013-10-05 16:00,2013-10-15 16:00,,PT_Normal,,,,,v/0bygmB9E2hLrcqnSHc0w,hPUKKJy5e0es1GO+iI/vjQ,,,N,0,0,,,2013-06-23 13:01,2013-06-23 13:01,admin,admin
828,86793,1346,11564,1473,1,0,N,N,N,CP_Phys,TT_Task,DT_FixedDrtn,RV_OK,TK_NotStart,B2982,Prepartion & Submission for Mortar - Hydrated Lime Base,,1159,0,80,0,0,0,80,0,0,0,,,,2013-10-05 16:00,2013-10-15 16:00,,2013-04-23 07:00,2013-05-04 17:00,2013-04-23 07:00,2013-05-04 17:00,2013-04-23 07:00,2013-05-04 17:00,,2013-10-05 16:00,2013-10-15 16:00,,PT_Normal,,,,,dY/ong/vf02l0qanIwR6CQ,2o+BlLU7G06oPeqB9d1kkA,,,N,0,0,,,2013-06-23 13:01,2013-06-23 13:01,admin,admin
829,86794,1346,11564,1473,1,0,N,N,N,CP_Phys,TT_Task,DT_FixedDrtn,RV_OK,TK_NotStart,B3012,Prepartion & Submission for Filter Membrane,,1159,0,80,0,0,0,80,0,0,0,,,,2013-10-05 16:00,2013-10-15 16:00,,2013-04-23 07:00,2013-05-04 17:00,2013-04-23 07:00,2013-05-04 17:00,2013-04-23 07:00,2013-05-04 17:00,,2013-10-05 16:00,2013-10-15 16:00,,PT_Normal,,,,,0ryrg2WR0k2g0fuVKh2yiQ,siAK1fNfTkWLgfbO9qefcA,,,N,0,0,,,2013-06-23 13:01,2013-06-23 13:01,admin,admin
830,86795,1346,11564,1473,1,0,N,N,N,CP_Phys,TT_Task,DT_FixedDrtn,RV_OK,TK_NotStart,B3222,Prepartion & Submission for Bedded Sand,,1230,0,80,0,0,0,80,0,0,0,,,,2013-10-15 07:00,2013-10-26 17:00,,2013-04-23 07:00,2013-05-04 17:00,2013-04-23 07:00,2013-05-04 17:00,2013-04-23 07:00,2013-05-04 17:00,,2013-10-15 07:00,2013-10-26 17:00,,PT_Normal,,,,,IrFsUU1wy0KG0OQLfy/nsQ,d5/ZpbmINEKZkX+QSOkFLg,,,N,0,0,,,2013-06-23 13:01,2013-06-23 13:01,admin,admin
831,86796,1346,11564,1474,1,0,N,N,N,CP_Phys,TT_Task,DT_FixedDrtn,RV_OK,TK_NotStart,B3692,Prepartion & Submission for Ductile Iron Manhole Cover,,1889,0,80,0,0,0,80,0,0,0,,,,2013-10-28 16:00,2013-11-05 16:00,,2013-04-23 07:00,2013-04-30 17:00,2013-04-23 07:00,2013-04-30 17:00,2013-04-23 07:00,2013-04-30 17:00,,2013-10-28 16:00,2013-11-05 16:00,,PT_Normal,,,,,5ZhqIdvX/E+Dr9Yi7TowSw,sCCWDxOzAUOkqSXXleaoxw,,,N,0,0,,,2013-06-23 13:01,2013-06-23 13:01,admin,admin
832,86797,1346,11560,1473,1,0,N,N,N,CP_Phys,TT_Task,DT_FixedDrtn,RV_OK,TK_NotStart,OCEC10931,Install W-Beam Guardrail transition Section and terminal end,2969,1219,0,100,0,1800,1800,100,200,0,200,,,,2013-12-24 16:00,2014-01-07 16:00,,2013-07-02 07:00,2013-07-15 17:00,2013-07-02 07:00,2013-07-15 17:00,2013-07-02 07:00,2013-07-15 17:00,,2013-12-24 16:00,2014-01-07 16:00,,PT_Normal,,,,,z1cY/JWQu0GeasUqdn9U8Q,B6BA3RDsQu+JhQdOnm9RTw,,,N,0,0,,,2013-06-23 13:01,2013-06-23 13:01,admin,admin
833,86798,1346,11560,1473,1,0,N,N,N,CP_Phys,TT_Task,DT_FixedDrtn,RV_OK,TK_NotStart,OCEC18361,Concrete Barrier Works,2969,1219,20,60,0,1080,1080,60,120,0,120,,,,2014-01-07 16:00,2014-01-15 16:00,,2013-07-16 07:00,2013-07-23 17:00,2013-07-16 07:00,2013-07-23 17:00,2013-07-16 07:00,2013-07-23 17:00,,2014-01-07 16:00,2014-01-15 16:00,,PT_Normal,,,,,wDovydihxUaQBhG7mPxcIA,8LTn4aQaRdGOE4uP2GfMow,,,N,0,0,,,2013-06-23 13:01,2013-06-23 13:01,admin,admin
834,86799,1346,11560,1473,1,0,N,N,N,CP_Phys,TT_Task,DT_FixedDrtn,RV_OK,TK_NotStart,OCEC18371,Chain Link Fence to Master Plan Boundary,,1199,520,250,0,0,0,250,0,0,0,,,,2013-12-11 16:00,2014-01-15 16:00,,2013-06-23 07:00,2013-07-27 17:00,2013-06-23 07:00,2013-07-27 17:00,2013-06-23 07:00,2013-07-27 17:00,,2013-12-11 16:00,2014-01-15 16:00,,PT_Normal,,,,,jUqUnBD34EOb7jWk5P2cVg,grXaBU4GRV+5O/TYofzDpQ,,,N,0,0,,,2013-06-23 13:01,2013-06-23 13:01,admin,admin
835,86800,1346,11560,1473,1,0,N,N,N,CP_Phys,TT_Task,DT_FixedDrtn,RV_OK,TK_NotStart,OCEC19661,Setting out and Survey Works,2983,1249,30,30,0,60,60,30,30,0,30,,,,2013-12-21 16:00,2013-12-24 16:00,,2013-06-24 07:00,2013-06-26 17:00,2013-06-24 07:00,2013-06-26 17:00,2013-06-24 07:00,2013-06-26 17:00,,2013-12-21 16:00,2013-12-24 16:00,,PT_Normal,,,,,y3bseItwrE2miaIMsTEPtw,HHRT/cfJQi67V7NZ/qCwIw,,,N,0,0,,,2013-06-23 13:01,2013-06-23 13:01,admin,admin
836,86801,1346,11560,1473,1,0,N,N,N,CP_Phys,TT_Task,DT_FixedDrtn,RV_OK,TK_NotStart,A15067,Prepare and Submit Method Statment for Barriers and Fences,,1219,0,120,0,0,0,120,0,0,0,,,,2013-11-16 16:00,2013-12-04 16:00,,2013-05-27 07:00,2013-06-11 17:00,2013-05-27 07:00,2013-06-11 17:00,2013-05-27 07:00,2013-06-11 17:00,,2013-11-16 16:00,2013-12-04 16:00,,PT_Normal,,,,,Go51PrcDckmHr0n1sN/dHQ,+fh0l92pSpqULrjZQcN8cA,,,N,0,0,,,2013-06-23 13:01,2013-06-23 13:01,admin,admin
837,86802,1346,11560,1473,1,0,N,N,N,CP_Phys,TT_Task,DT_FixedDrtn,RV_OK,TK_NotStart,A15068,Review and approval for Method Statment for Barriers and Fences,,1219,0,140,0,0,0,140,0,0,0,,,,2013-12-04 16:00,2013-12-24 16:00,,2013-06-12 07:00,2013-07-01 17:00,2013-06-12 07:00,2013-07-01 17:00,2013-06-12 07:00,2013-07-01 17:00,,2013-12-04 16:00,2013-12-24 16:00,,PT_Normal,,,,,vlck7AQtDkidcg0eDgDvEg,LEWRwVhHRGiPYczBwfz/6w,,,N,0,0,,,2013-06-23 13:01,2013-06-23 13:01,admin,admin
838,86803,1346,11560,1473,1,0,N,N,N,CP_Phys,TT_Task,DT_FixedDrtn,RV_OK,TK_NotStart,B2521,MIR for W-Beam Safty Barriers,,1289,40,20,0,0,0,20,0,0,0,,,,2013-12-22 16:00,2013-12-24 16:00,,2013-06-19 07:00,2013-06-22 17:00,2013-06-19 07:00,2013-06-22 17:00,2013-06-19 07:00,2013-06-22 17:00,,2013-12-22 16:00,2013-12-24 16:00,,PT_Normal,,,,,sIRNx7NjzEKSF4USfsOOQA,zYuYTUfbSGyUn6Lb1SGaWw,,,N,0,0,,,2013-06-23 13:01,2013-06-23 13:01,admin,admin
839,86804,1346,11560,1473,1,0,N,N,N,CP_Phys,TT_Task,DT_FixedDrtn,RV_OK,TK_NotStart,B2531,MAR for W-Beam Safty Barriers,,1289,0,220,0,0,0,220,0,0,0,,,,2013-11-03 16:00,2013-12-07 16:00,,2013-05-05 07:00,2013-06-03 17:00,2013-05-05 07:00,2013-06-03 17:00,2013-05-05 07:00,2013-06-03 17:00,,2013-11-03 16:00,2013-12-07 16:00,,PT_Normal,,,,,69MxlwM8IkaE8+JrX5vW3g,r0HGOPO0TcGi5T44tmaVGA,,,N,0,0,,,2013-06-23 13:01,2013-06-23 13:01,admin,admin
840,86805,1346,11560,1474,1,0,N,N,N,CP_Phys,TT_Task,DT_FixedDrtn,RV_OK,TK_NotStart,B2541,Procurment  for W-Beam Safty Barriers,,1869,0,150,0,0,0,150,0,0,0,,,,2013-12-07 16:00,2013-12-22 16:00,,2013-06-04 07:00,2013-06-18 17:00,2013-06-04 07:00,2013-06-18 17:00,2013-06-04 07:00,2013-06-18 17:00,,2013-12-07 16:00,2013-12-22 16:00,,PT_Normal,,,,,18eqHfJuT0yNNhJ12UIMRA,mvR6jiO7QkWA8vwvrK1Fvg,,,N,0,0,,,2013-06-23 13:01,2013-06-23 13:01,admin,admin
841,86806,1346,11560,1473,1,0,N,N,N,CP_Phys,TT_Task,DT_FixedDrtn,RV_OK,TK_NotStart,B2551,MIR for Gate for Fences,,1199,0,20,0,0,0,20,0,0,0,,,,2013-12-09 16:00,2013-12-11 16:00,,2013-06-19 07:00,2013-06-22 17:00,2013-06-19 07:00,2013-06-22 17:00,2013-06-19 07:00,2013-06-22 17:00,,2013-12-09 16:00,2013-12-11 16:00,,PT_Normal,,,,,BLxHtBUUsUaPrSR3Kgy44Q,s3dWrQ19Smu3F/ej3jlEog,,,N,0,0,,,2013-06-23 13:01,2013-06-23 13:01,admin,admin
842,86807,1346,11560,1473,1,0,N,N,N,CP_Phys,TT_Task,DT_FixedDrtn,RV_OK,TK_NotStart,B2561,MAR for Gate for Fences,,1199,0,220,0,0,0,220,0,0,0,,,,2013-10-21 16:00,2013-11-24 16:00,,2013-05-05 07:00,2013-06-03 17:00,2013-05-05 07:00,2013-06-03 17:00,2013-05-05 07:00,2013-06-03 17:00,,2013-10-21 16:00,2013-11-24 16:00,,PT_Normal,,,,,3/Wo1WvNM0KDtKendxLBdQ,PdUf6XO1TDuvH3GP/qREHQ,,,N,0,0,,,2013-06-23 13:01,2013-06-23 13:01,admin,admin
843,86808,1346,11560,1474,1,0,N,N,N,CP_Phys,TT_Task,DT_FixedDrtn,RV_OK,TK_NotStart,B2571,Procurment  for Gate for Fences,,1739,0,150,0,0,0,150,0,0,0,,,,2013-11-24 16:00,2013-12-09 16:00,,2013-06-04 07:00,2013-06-18 17:00,2013-06-04 07:00,2013-06-18 17:00,2013-06-04 07:00,2013-06-18 17:00,,2013-11-24 16:00,2013-12-09 16:00,,PT_Normal,,,,,KPYD7pWOcEmQCXKJJ9mc0w,HndS4UpQTaGIZit04fnPrw,,,N,0,0,,,2013-06-23 13:01,2013-06-23 13:01,admin,admin
844,86809,1346,11560,1473,1,0,N,N,N,CP_Phys,TT_Task,DT_FixedDrtn,RV_OK,TK_NotStart,B2581,MIR for Fencing Material,,1289,90,20,0,0,0,20,0,0,0,,,,2013-12-09 16:00,2013-12-11 16:00,,2013-06-08 07:00,2013-06-09 17:00,2013-06-08 07:00,2013-06-09 17:00,2013-06-08 07:00,2013-06-09 17:00,,2013-12-09 16:00,2013-12-11 16:00,,PT_Normal,,,,,13JDcCgwUky2Q7EYIYi71A,krXFrEBDS4e3OudfthbFPw,,,N,0,0,,,2013-06-23 13:01,2013-06-23 13:01,admin,admin
845,86810,1346,11560,1473,1,80,N,N,N,CP_Phys,TT_Task,DT_FixedDrtn,RV_OK,TK_Active,B2591,MAR for Fencing Material,,1279,0,220,0,0,0,220,0,0,0,,2013-04-01 00:00,,2013-10-21 16:00,2013-11-24 16:00,,2013-04-23 07:00,2013-05-22 17:00,2013-04-23 07:00,2013-05-22 17:00,2013-05-05 07:00,2013-06-03 17:00,,2013-10-21 16:00,2013-11-24 16:00,,PT_Normal,,,,,KZ+7XSmEhU6JCSX1adZxpQ,8jxlJ4j4TZO6UOmtJECy5g,,,N,0,0,,,2013-06-23 13:01,2013-06-23 13:01,admin,admin
846,86811,1346,11560,1474,1,0,N,N,N,CP_Phys,TT_Task,DT_FixedDrtn,RV_OK,TK_NotStart,B2601,Procurment  for Fencing Material,,1859,10,150,0,0,0,150,0,0,0,,,,2013-11-24 16:00,2013-12-09 16:00,,2013-05-23 07:00,2013-06-06 17:00,2013-05-23 07:00,2013-06-06 17:00,2013-05-23 07:00,2013-06-06 17:00,,2013-11-24 16:00,2013-12-09 16:00,,PT_Normal,,,,,/ShOXHb2CU+9NcE19jbuKQ,kWhp81RLRSexaa7W1lPTOA,,,N,0,0,,,2013-06-23 13:01,2013-06-23 13:01,admin,admin
847,86812,1346,11560,1473,1,0,N,N,N,CP_Phys,TT_Task,DT_FixedDrtn,RV_OK,TK_NotStart,B2532,Prepartion & Submission for W-Beam Safty Barriers,,1289,0,80,0,0,0,80,0,0,0,,,,2013-10-22 16:00,2013-11-03 16:00,,2013-04-23 07:00,2013-05-04 17:00,2013-04-23 07:00,2013-05-04 17:00,2013-04-23 07:00,2013-05-04 17:00,,2013-10-22 16:00,2013-11-03 16:00,,PT_Normal,,,,,7I4IxLKe5E+D/jNQBhAInw,VgNsMzgQr0e89U3uT2MolA,,,N,0,0,,,2013-06-23 13:01,2013-06-23 13:01,admin,admin
848,86813,1346,11560,1473,1,100,N,N,N,CP_Phys,TT_Task,DT_FixedDrtn,RV_OK,TK_Complete,B2592,Prepartion & Submission for Fencing Material,,,,0,0,0,0,80,0,0,0,,2013-03-20 00:00,2013-04-01 00:00,2013-10-21 16:00,2013-10-21 16:00,,2013-04-23 00:00,2013-04-23 00:00,,,2013-04-23 07:00,2013-05-04 17:00,,,,,PT_Normal,,,,,6bkSImj2L0WtDDIgLSKdaA,+9yc1IubTkOOIoH0iab1TA,,,N,0,0,,,2013-06-23 13:01,2013-06-23 13:01,admin,admin
849,86814,1346,11560,1473,1,0,N,N,N,CP_Phys,TT_Task,DT_FixedDrtn,RV_OK,TK_NotStart,B2562,Prepartion & Submission for Gate for Fences,,1199,0,80,0,0,0,80,0,0,0,,,,2013-10-09 16:00,2013-10-21 16:00,,2013-04-23 07:00,2013-05-04 17:00,2013-04-23 07:00,2013-05-04 17:00,2013-04-23 07:00,2013-05-04 17:00,,2013-10-09 16:00,2013-10-21 16:00,,PT_Normal,,,,,6huDJHqeKU6vjOdU2jmzaw,eAyHFy+GMEGGxPbmLKsqFQ,,,N,0,0,,,2013-06-23 13:01,2013-06-23 13:01,admin,admin
850,86815,1346,11708,1473,1,50,N,N,N,CP_Phys,TT_Task,DT_FixedDUR2,RV_OK,TK_Active,OCEC10311,Shopdrawings Layout and Cross Sections for Roads no. 3,,1119,0,140,0,0,0,140,0,0,0,,2013-02-03 16:00,,2013-09-29 16:00,2013-10-19 16:00,,2013-04-23 07:00,2013-05-12 17:00,2013-04-23 07:00,2013-05-12 17:00,2013-02-03 16:00,2013-02-23 16:00,,2013-09-29 16:00,2013-10-19 16:00,,PT_Normal,,,,,yYtxRDFdX0mW70ixyHdG+g,8afxuVRGTdKs3z1x4mHMng,,,N,0,0,,,2013-06-23 13:01,2013-06-23 13:01,admin,admin
851,86816,1346,11740,1473,1,100,N,N,N,CP_Phys,TT_Task,DT_FixedDrtn,RV_OK,TK_Complete,OCEC9974,Shopdrawings Layout and Cross Sections for Roads no. 3,,,,0,0,0,0,120,0,0,0,,2013-01-16 16:00,2013-02-03 16:00,2013-09-29 16:00,2013-09-29 16:00,,2013-04-23 00:00,2013-04-23 00:00,,,2013-01-16 16:00,2013-02-03 16:00,,,,,PT_Normal,,,,,+t2o2je23UyUdI9aJveGmg,C1g7qaLQSk+kZmjr8LP+Ig,,,N,0,0,,,2013-06-23 13:01,2013-06-23 13:01,admin,admin
852,86817,1346,11565,1473,1,0,N,N,N,CP_Phys,TT_Task,DT_FixedDrtn,RV_OK,TK_NotStart,OCEC9541,Removal of Structures and Obstructions,,1099,280,120,0,0,0,120,0,0,0,,,,2013-09-25 16:00,2013-10-13 16:00,,2013-04-23 07:00,2013-05-08 17:00,2013-04-23 07:00,2013-05-08 17:00,2013-04-23 07:00,2013-05-08 17:00,,2013-09-25 16:00,2013-10-13 16:00,,PT_Normal,,,,,fGQN4OH8VEu5ImZlAGkTDg,19IAKFWWQ+6/Ims0v0AXSw,,,N,0,0,,,2013-06-23 13:01,2013-06-23 13:01,admin,admin
853,86818,1346,11565,1473,1,0,N,N,N,CP_Phys,TT_Task,DT_FixedDrtn,RV_OK,TK_NotStart,OCEC9551,Embankment filling and sub grade preparation,3001,1093,0,120,0,3360,3360,120,2280,0,2280,,,,2013-12-10 10:00,2013-12-28 10:00,,2013-07-06 07:00,2013-07-21 17:00,2013-07-06 07:00,2013-07-21 17:00,2013-07-06 07:00,2013-07-21 17:00,,2013-12-10 10:00,2013-12-28 10:00,,PT_Normal,,,,,2ilpcku3XE2wTv5EE/p+xg,S7u4zoC0SWm+cL5vGVRKEg,,,N,0,0,,,2013-06-23 13:01,2013-06-23 13:01,admin,admin
854,86819,1346,11565,1473,1,0,N,N,N,CP_Phys,TT_Task,DT_FixedDrtn,RV_OK,TK_NotStart,OCEC9561,Granular sub base course Class B - 150 mm thick,2969,1093,0,60,0,1020,1020,60,660,0,660,,,,2013-12-18 10:00,2013-12-28 10:00,,2013-07-14 07:00,2013-07-21 17:00,2013-07-14 07:00,2013-07-21 17:00,2013-07-14 07:00,2013-07-21 17:00,,2013-12-18 10:00,2013-12-28 10:00,,PT_Normal,,,,,jIKoKjMJuUOYuv9MwXBW5w,mJdI3EdGQnigWPjdM3VeZw,,,N,0,0,,,2013-06-23 13:01,2013-06-23 13:01,admin,admin
855,86820,1346,11565,1473,1,0,N,N,N,CP_Phys,TT_Task,DT_FixedDrtn,RV_OK,TK_NotStart,OCEC9571,Aggregate base course Class A - 100 mm and 150 mm thick,2969,1093,0,30,0,510,510,30,300,0,300,,,,2014-01-01 10:00,2014-01-06 10:00,,2013-07-28 07:00,2013-07-30 17:00,2013-07-28 07:00,2013-07-30 17:00,2013-07-28 07:00,2013-07-30 17:00,,2014-01-01 10:00,2014-01-06 10:00,,PT_Normal,,,,,Y54vETFcc0S98zyyIvc02Q,QSr5delQRsGKZKJ2oPlT4g,,,N,0,0,,,2013-06-23 13:01,2013-06-23 13:01,admin,admin
856,86821,1346,11565,1473,1,0,N,N,N,CP_Phys,TT_Task,DT_FixedDrtn,RV_OK,TK_NotStart,OCEC9581,Bituminous prime coat and bituminous base course Class A - 50 mm thick,2969,1093,0,16,0,296,296,16,240,0,240,,,,2014-01-06 10:00,2014-01-07 16:00,,2013-07-31 07:00,2013-08-03 13:00,2013-07-31 07:00,2013-08-03 13:00,2013-07-31 07:00,2013-08-03 13:00,,2014-01-06 10:00,2014-01-07 16:00,,PT_Normal,,,,,hBUV4aNzDka5/EYDWkL4/Q,7iZlRSnkT/KDI74z5BLXiA,,,N,0,0,,,2013-06-23 13:01,2013-06-23 13:01,admin,admin
857,86822,1346,11565,1473,1,0,N,N,N,CP_Phys,TT_Task,DT_FixedDrtn,RV_OK,TK_NotStart,OCEC9591,Bituminous take coat and bituminous wearing course Class A - 50 mm thick,2969,1093,414,60,0,1260,1260,60,960,0,960,,,,2014-01-07 16:00,2014-01-15 16:00,,2013-08-03 13:00,2013-08-13 13:00,2013-08-03 13:00,2013-08-13 13:00,2013-08-03 13:00,2013-08-13 13:00,,2014-01-07 16:00,2014-01-15 16:00,,PT_Normal,,,,,pB1oUzGBoU2GA7rmdHJ65Q,POanExYITjyS/GTTTWo5ag,,,N,0,0,,,2013-06-23 13:01,2013-06-23 13:01,admin,admin
858,86823,1346,11565,1473,1,0,N,N,N,CP_Phys,TT_Task,DT_FixedDrtn,RV_OK,TK_NotStart,OCEC9661,Unclassified excavation and removal,3001,1093,0,80,0,1040,1040,80,480,0,480,,,,2013-12-04 10:00,2013-12-16 10:00,,2013-06-30 07:00,2013-07-09 17:00,2013-06-30 07:00,2013-07-09 17:00,2013-06-30 07:00,2013-07-09 17:00,,2013-12-04 10:00,2013-12-16 10:00,,PT_Normal,,,,,UWtu3WwLiUKY0Wvsd1WsLw,2UnxKaZHSf+4ae/+3+x95Q,,,N,0,0,,,2013-06-23 13:01,2013-06-23 13:01,admin,admin
859,86824,1346,11565,1473,1,0,N,N,N,CP_Phys,TT_Task,DT_FixedDrtn,RV_OK,TK_NotStart,OCEC9611,Clearing and grubbing,2969,819,0,40,0,320,320,40,160,0,160,,,,2013-10-13 16:00,2013-10-19 16:00,,2013-06-18 07:00,2013-06-23 17:00,2013-06-18 07:00,2013-06-23 17:00,2013-06-18 07:00,2013-06-23 17:00,,2013-10-13 16:00,2013-10-19 16:00,,PT_Normal,,,,,li/oJ7ILLUuhXFFTakO2tg,KIx/7tXgQu+tdlOurT4Kng,,,N,0,0,,,2013-06-23 13:01,2013-06-23 13:01,admin,admin
860,86825,1346,11565,1473,1,0,N,N,N,CP_Phys,TT_Task,DT_FixedDrtn,RV_OK,TK_NotStart,OCEC9621,Setting out and route survey,2983,819,0,40,0,80,80,40,40,0,40,,,,2013-10-19 16:00,2013-10-23 16:00,,2013-06-24 07:00,2013-06-29 17:00,2013-06-24 07:00,2013-06-29 17:00,2013-06-24 07:00,2013-06-29 17:00,,2013-10-19 16:00,2013-10-23 16:00,,PT_Normal,,,,,JoSLb8EzV0SYvlzHJDuEiw,y+TZfDBHRsWEJpOQtxlxFg,,,N,0,0,,,2013-06-23 13:01,2013-06-23 13:01,admin,admin
861,86826,1346,11565,1473,1,100,N,N,N,CP_Phys,TT_Task,DT_FixedDrtn,RV_OK,TK_Complete,A15081,Prepare and Submit Method Statment for Embankment Filling Works,,,,0,0,0,0,140,0,0,0,,2013-02-06 16:00,2013-02-26 16:00,2013-09-14 16:00,2013-09-14 16:00,,2013-05-13 17:00,2013-05-13 17:00,,,2013-02-06 16:00,2013-02-26 16:00,,,,,PT_Normal,,,,,QjC/t24roE+CNPugxTj7Kg,QiGHFuL3RHGup9kp5nQsEw,,,N,0,0,,,2013-06-23 13:01,2013-06-23 13:01,admin,admin
862,86827,1346,11565,1473,1,0,N,N,N,CP_Phys,TT_Task,DT_FixedDrtn,RV_OK,TK_NotStart,A15082,Review and approval for Method Statment for Embankment Filling Works,,1323,230,140,0,0,0,140,0,0,0,,,,2013-11-18 10:00,2013-12-10 10:00,,2013-05-14 07:00,2013-06-02 17:00,2013-05-14 07:00,2013-06-02 17:00,2013-05-14 07:00,2013-06-02 17:00,,2013-11-18 10:00,2013-12-10 10:00,,PT_Normal,,,,,IFRf1l15QEei4TMjyGglCA,1buVR5jkSs+XLCgWr/xlTQ,,,N,0,0,,,2013-06-23 13:01,2013-06-23 13:01,admin,admin
863,86828,1346,11565,1473,1,100,N,N,N,CP_Phys,TT_Task,DT_FixedDrtn,RV_OK,TK_Complete,A15083,Prepare and Submit Method Statment for Sub-grade Works,,,,0,0,0,0,140,0,0,0,,2013-02-11 16:00,2013-03-03 16:00,2013-09-14 16:00,2013-09-14 16:00,,2013-05-13 17:00,2013-05-13 17:00,,,2013-02-11 16:00,2013-03-03 16:00,,,,,PT_Normal,,,,,VQX2YwXOSkSj/Uh27279sg,wjfFEsuVR5+19zx76NmwGQ,,,N,0,0,,,2013-06-23 13:01,2013-06-23 13:01,admin,admin
864,86829,1346,11565,1473,1,100,N,N,N,CP_Phys,TT_Task,DT_FixedDrtn,RV_OK,TK_Complete,A15084,Review and approval for Method Statment for Sub-grade Works,,,,0,0,0,0,140,0,0,0,,2013-03-03 16:00,2013-03-23 16:00,2013-12-10 10:00,2013-12-10 10:00,,2013-05-13 17:00,2013-05-13 17:00,,,2013-03-03 16:00,2013-03-23 16:00,,,,,PT_Normal,,,,,u/XLPvZLFU6AgqMwhCxB4Q,K8QUgK/TSmGrQ8eHek0Fwg,,,N,0,0,,,2013-06-23 13:01,2013-06-23 13:01,admin,admin
865,86830,1346,11565,1473,1,100,N,N,N,CP_Phys,TT_Task,DT_FixedDrtn,RV_OK,TK_Complete,A15085,Prepare and Submit Method Statment for Granular Sub-Base Works,,,,0,0,0,0,140,0,0,0,,2013-02-16 16:00,2013-03-06 16:00,2013-09-14 16:00,2013-09-14 16:00,,2013-05-13 17:00,2013-05-13 17:00,,,2013-02-16 16:00,2013-03-06 16:00,,,,,PT_Normal,,,,,sSufcjQqpkKoEQOF2UGg4A,E4KkJH9HT6iSsxOv8g1g9g,,,N,0,0,,,2013-06-23 13:01,2013-06-23 13:01,admin,admin
866,86831,1346,11565,1473,1,100,N,N,N,CP_Phys,TT_Task,DT_FixedDrtn,RV_OK,TK_Complete,A15086,Review and approval for Method Statment for Granular Sub-Base Works,,,,0,0,0,0,140,0,0,0,,2013-03-06 16:00,2013-03-26 16:00,2013-12-18 10:00,2013-12-18 10:00,,2013-05-13 17:00,2013-05-13 17:00,,,2013-03-06 16:00,2013-03-26 16:00,,,,,PT_Normal,,,,,AOCvkcfVmU+Dpqb1BGUNWw,J7+OYgaxQdeq+0EviR9c6g,,,N,0,0,,,2013-06-23 13:01,2013-06-23 13:01,admin,admin
867,86832,1346,11565,1473,1,100,N,N,N,CP_Phys,TT_Task,DT_FixedDrtn,RV_OK,TK_Complete,A15087,Prepare and Submit Method Statment for Aggregate Base Course Works,,,,0,0,0,0,140,0,0,0,,2013-03-11 00:00,2013-03-30 17:00,2013-09-14 16:00,2013-09-14 16:00,,2013-05-13 17:00,2013-05-13 17:00,,,2013-02-19 16:00,2013-03-11 16:00,,,,,PT_Normal,,,,,1FYCFqxWI0WH+5gn4OhVqg,OJK1X3SWRFOgxG+bdMjFGA,,,N,0,0,,,2013-06-23 13:01,2013-06-23 13:01,admin,admin
868,86833,1346,11565,1473,1,100,N,N,N,CP_Phys,TT_Task,DT_FixedDrtn,RV_OK,TK_Complete,A15088,Review and approval for Method Statment for Aggregate Base Course Works,,,,0,0,0,0,140,0,0,0,,2013-03-11 16:00,2013-03-31 16:00,2014-01-01 10:00,2014-01-01 10:00,,2013-05-13 17:00,2013-05-13 17:00,,,2013-03-11 16:00,2013-03-31 16:00,,,,,PT_Normal,,,,,XhRlsbeIqkiwxB/zsiLPPA,ewFSStrxQTKpYPcxdPDV1Q,,,N,0,0,,,2013-06-23 13:01,2013-06-23 13:01,admin,admin
869,86834,1346,11565,1473,1,0,N,N,N,CP_Phys,TT_Task,DT_FixedDrtn,RV_OK,TK_NotStart,A15089,Prepare and Submit Method Statment for Bitumenious Base & Wearing Course Works,,859,0,140,0,0,0,140,0,0,0,,,,2013-09-14 16:00,2013-10-02 16:00,,2013-05-14 07:00,2013-06-02 17:00,2013-05-14 07:00,2013-06-02 17:00,2013-05-14 07:00,2013-06-02 17:00,,2013-09-14 16:00,2013-10-02 16:00,,PT_Normal,,,,,KWmdS+Lo8EOWDNZNYvUoyg,jtUuQFtcSQyyprFQZnyKzw,,,N,0,0,,,2013-06-23 13:01,2013-06-23 13:01,admin,admin
870,86835,1346,11565,1473,1,0,N,N,N,CP_Phys,TT_Task,DT_FixedDrtn,RV_OK,TK_NotStart,A15090,Review and approval for Method Statment for Bitumenious Base & Wearing Course Works,,1373,280,140,0,0,0,140,0,0,0,,,,2013-12-17 10:00,2014-01-06 10:00,,2013-06-03 07:00,2013-06-22 17:00,2013-06-03 07:00,2013-06-22 17:00,2013-06-03 07:00,2013-06-22 17:00,,2013-12-17 10:00,2014-01-06 10:00,,PT_Normal,,,,,LNTQ0oWvokeEPNYxn5boUg,FEdglMjMTCGOFhJq+qxhdg,,,N,0,0,,,2013-06-23 13:01,2013-06-23 13:01,admin,admin
871,86836,1346,11565,1473,1,0,N,N,N,CP_Phys,TT_Task,DT_FixedDrtn,RV_OK,TK_NotStart,B1601,MAR for Subgrade Material,,1233,140,300,0,0,0,300,0,0,0,,,,2013-10-27 10:00,2013-12-10 10:00,,2013-05-05 07:00,2013-06-15 17:00,2013-05-05 07:00,2013-06-15 17:00,2013-05-05 07:00,2013-06-15 17:00,,2013-10-27 10:00,2013-12-10 10:00,,PT_Normal,,,,,BDbFgNQOKkmyc6T3P92/0Q,ZrpRk/CfTLiBGIlorPni/g,,,N,0,0,,,2013-06-23 13:01,2013-06-23 13:01,admin,admin
872,86837,1346,11565,1473,1,0,N,N,N,CP_Phys,TT_Task,DT_FixedDrtn,RV_OK,TK_NotStart,B1621,MIR for Bituminous Base Course,,1403,310,20,0,0,0,20,0,0,0,,,,2014-01-04 10:00,2014-01-06 10:00,,2013-06-16 07:00,2013-06-17 17:00,2013-06-16 07:00,2013-06-17 17:00,2013-06-16 07:00,2013-06-17 17:00,,2014-01-04 10:00,2014-01-06 10:00,,PT_Normal,,,,,huYNbTdVckOoLaa2wpURAg,+ENkaUMaREKkrTZKQ7buhg,,,N,0,0,,,2013-06-23 13:01,2013-06-23 13:01,admin,admin
873,86838,1346,11565,1473,1,0,N,N,N,CP_Phys,TT_Task,DT_FixedDrtn,RV_OK,TK_NotStart,B1631,MAR for Bituminous Base Course,,1403,0,220,0,0,0,220,0,0,0,,,,2013-11-23 10:00,2013-12-23 10:00,,2013-05-05 07:00,2013-06-03 17:00,2013-05-05 07:00,2013-06-03 17:00,2013-05-05 07:00,2013-06-03 17:00,,2013-11-23 10:00,2013-12-23 10:00,,PT_Normal,,,,,vav3pXfBdESRMBcuGq2lLw,qnn6k99QRCGhEhPOurbVOA,,,N,0,0,,,2013-06-23 13:01,2013-06-23 13:01,admin,admin
874,86839,1346,11565,1474,1,0,N,N,N,CP_Phys,TT_Task,DT_FixedDrtn,RV_OK,TK_NotStart,B1641,Procurment  for Bituminous Base Course,,2023,0,120,0,0,0,120,0,0,0,,,,2013-12-23 10:00,2014-01-04 10:00,,2013-06-04 07:00,2013-06-15 17:00,2013-06-04 07:00,2013-06-15 17:00,2013-06-04 07:00,2013-06-15 17:00,,2013-12-23 10:00,2014-01-04 10:00,,PT_Normal,,,,,CRpdSXV6NE+ab4d5UfVL0A,XKFfDR7+T0OiqPkIEB3NCA,,,N,0,0,,,2013-06-23 13:01,2013-06-23 13:01,admin,admin
875,86840,1346,11565,1473,1,0,N,N,N,CP_Phys,TT_Task,DT_FixedDrtn,RV_OK,TK_NotStart,B1651,MIR for Bituminous Wearing Course,,1419,326,20,0,0,0,20,0,0,0,,,,2014-01-05 16:00,2014-01-07 16:00,,2013-06-16 07:00,2013-06-17 17:00,2013-06-16 07:00,2013-06-17 17:00,2013-06-16 07:00,2013-06-17 17:00,,2014-01-05 16:00,2014-01-07 16:00,,PT_Normal,,,,,zFth8HG3wUaYNFURiQszvw,uz/t1cI1QF+QnpZw2xRHeQ,,,N,0,0,,,2013-06-23 13:01,2013-06-23 13:01,admin,admin
876,86841,1346,11565,1473,1,0,N,N,N,CP_Phys,TT_Task,DT_FixedDrtn,RV_OK,TK_NotStart,B1661,MAR for Bituminous Wearing Course,,1419,0,220,0,0,0,220,0,0,0,,,,2013-11-24 16:00,2013-12-24 16:00,,2013-05-05 07:00,2013-06-03 17:00,2013-05-05 07:00,2013-06-03 17:00,2013-05-05 07:00,2013-06-03 17:00,,2013-11-24 16:00,2013-12-24 16:00,,PT_Normal,,,,,ZGd25gmQ80KYXAsbhc9tHQ,TPZT7deTSBmhAf6k3nGy6g,,,N,0,0,,,2013-06-23 13:01,2013-06-23 13:01,admin,admin
877,86842,1346,11565,1474,1,0,N,N,N,CP_Phys,TT_Task,DT_FixedDrtn,RV_OK,TK_NotStart,B1671,Procurment  for Bituminous Wearing Course,,2039,0,120,0,0,0,120,0,0,0,,,,2013-12-24 16:00,2014-01-05 16:00,,2013-06-04 07:00,2013-06-15 17:00,2013-06-04 07:00,2013-06-15 17:00,2013-06-04 07:00,2013-06-15 17:00,,2013-12-24 16:00,2014-01-05 16:00,,PT_Normal,,,,,Lf2fMk7VJEiAxXPWC6+z9Q,KqtvR1byTDGYrN1Ht706UA,,,N,0,0,,,2013-06-23 13:01,2013-06-23 13:01,admin,admin
878,86843,1346,11565,1473,1,0,N,N,N,CP_Phys,TT_Task,DT_FixedDrtn,RV_OK,TK_NotStart,B1681,MIR for Prime Coat - MC - 70,,1403,310,20,0,0,0,20,0,0,0,,,,2014-01-04 10:00,2014-01-06 10:00,,2013-06-16 07:00,2013-06-17 17:00,2013-06-16 07:00,2013-06-17 17:00,2013-06-16 07:00,2013-06-17 17:00,,2014-01-04 10:00,2014-01-06 10:00,,PT_Normal,,,,,rbecb6VyW0SrPM/k6aEE1Q,a+p7VejQSVau77uWDfH5SA,,,N,0,0,,,2013-06-23 13:01,2013-06-23 13:01,admin,admin
879,86844,1346,11565,1473,1,0,N,N,N,CP_Phys,TT_Task,DT_FixedDrtn,RV_OK,TK_NotStart,B1691,MAR for Prime Coat - MC - 70,,1403,0,220,0,0,0,220,0,0,0,,,,2013-11-23 10:00,2013-12-23 10:00,,2013-05-05 07:00,2013-06-03 17:00,2013-05-05 07:00,2013-06-03 17:00,2013-05-05 07:00,2013-06-03 17:00,,2013-11-23 10:00,2013-12-23 10:00,,PT_Normal,,,,,Gsq9tGfMCkiT1Cj7veft/A,va1azYn4QWqqJfmERAKTYw,,,N,0,0,,,2013-06-23 13:01,2013-06-23 13:01,admin,admin
880,86845,1346,11565,1474,1,0,N,N,N,CP_Phys,TT_Task,DT_FixedDrtn,RV_OK,TK_NotStart,B1701,Procurment  for Prime Coat - MC - 70,,2023,0,120,0,0,0,120,0,0,0,,,,2013-12-23 10:00,2014-01-04 10:00,,2013-06-04 07:00,2013-06-15 17:00,2013-06-04 07:00,2013-06-15 17:00,2013-06-04 07:00,2013-06-15 17:00,,2013-12-23 10:00,2014-01-04 10:00,,PT_Normal,,,,,+mrq0w9rjEyF0YyDoMPX8g,iw9cZkOcS3SAHZTMObaDDg,,,N,0,0,,,2013-06-23 13:01,2013-06-23 13:01,admin,admin
881,86846,1346,11565,1473,1,0,N,N,N,CP_Phys,TT_Task,DT_FixedDrtn,RV_OK,TK_NotStart,B1711,MIR for Tack Coat - SS - 1 H,,819,0,20,0,0,0,20,0,0,0,,,,2013-10-09 16:00,2013-10-13 16:00,,2013-06-16 07:00,2013-06-17 17:00,2013-06-16 07:00,2013-06-17 17:00,2013-06-16 07:00,2013-06-17 17:00,,2013-10-09 16:00,2013-10-13 16:00,,PT_Normal,,,,,BXIc0IIxT02HUN691qkLgQ,SFpkamhvRPSgkEup4Za2aw,,,N,0,0,,,2013-06-23 13:01,2013-06-23 13:01,admin,admin
882,86847,1346,11565,1473,1,0,N,N,N,CP_Phys,TT_Task,DT_FixedDrtn,RV_OK,TK_NotStart,B1721,MAR for Tack Coat - SS - 1 H,,800,0,220,0,0,0,220,0,0,0,,,,2013-08-27 07:00,2013-09-25 17:00,,2013-05-05 07:00,2013-06-03 17:00,2013-05-05 07:00,2013-06-03 17:00,2013-05-05 07:00,2013-06-03 17:00,,2013-08-27 07:00,2013-09-25 17:00,,PT_Normal,,,,,DzCjo7itOkCSeUhqYLeqqw,7MDx6YBzRJ2Xkrl5cv8Cew,,,N,0,0,,,2013-06-23 13:01,2013-06-23 13:01,admin,admin
883,86848,1346,11565,1474,1,0,N,N,N,CP_Phys,TT_Task,DT_FixedDrtn,RV_OK,TK_NotStart,B1731,Procurment  for Tack Coat - SS - 1 H,,1159,0,120,0,0,0,120,0,0,0,,,,2013-09-27 16:00,2013-10-09 16:00,,2013-06-04 07:00,2013-06-15 17:00,2013-06-04 07:00,2013-06-15 17:00,2013-06-04 07:00,2013-06-15 17:00,,2013-09-27 16:00,2013-10-09 16:00,,PT_Normal,,,,,MnNRFZfYR0SnrJGu52sF5A,8FaF4n2FQQWpfsm8s1YwUg,,,N,0,0,,,2013-06-23 13:01,2013-06-23 13:01,admin,admin
884,86849,1346,11565,1473,1,0,N,N,N,CP_Phys,TT_Task,DT_FixedDrtn,RV_OK,TK_NotStart,B1741,MIR for Bitumen 60-70,,1413,320,20,0,0,0,20,0,0,0,,,,2014-01-04 10:00,2014-01-06 10:00,,2013-06-15 07:00,2013-06-16 17:00,2013-06-15 07:00,2013-06-16 17:00,2013-06-15 07:00,2013-06-16 17:00,,2014-01-04 10:00,2014-01-06 10:00,,PT_Normal,,,,,rrWy+7xi8UmMnlsAHKdaUQ,iKeDnoTmRT+FgmXgvenc2g,,,N,0,0,,,2013-06-23 13:01,2013-06-23 13:01,admin,admin
885,86850,1346,11565,1473,1,0,N,N,N,CP_Phys,TT_Task,DT_FixedDrtn,RV_OK,TK_NotStart,B1751,MAR for Bitumen 60-70,,1423,0,220,0,0,0,220,0,0,0,,,,2013-11-25 10:00,2013-12-25 10:00,,2013-05-05 07:00,2013-06-03 17:00,2013-05-05 07:00,2013-06-03 17:00,2013-05-05 07:00,2013-06-03 17:00,,2013-11-25 10:00,2013-12-25 10:00,,PT_Normal,,,,,rUiVoxY7JESKxuGKCeeFtw,b8ISzmUrT3maL5+Bqp5XHA,,,N,0,0,,,2013-06-23 13:01,2013-06-23 13:01,admin,admin
886,86851,1346,11565,1474,1,0,N,N,N,CP_Phys,TT_Task,DT_FixedDrtn,RV_OK,TK_NotStart,B1761,Procurment  for Bitumen 60-70,,2043,10,100,0,0,0,100,0,0,0,,,,2013-12-25 10:00,2014-01-04 10:00,,2013-06-04 07:00,2013-06-13 17:00,2013-06-04 07:00,2013-06-13 17:00,2013-06-04 07:00,2013-06-13 17:00,,2013-12-25 10:00,2014-01-04 10:00,,PT_Normal,,,,,feL76fBO7UqiyJ5t6dohhg,BxrfWu0USSycaFwuOD5cfQ,,,N,0,0,,,2013-06-23 13:01,2013-06-23 13:01,admin,admin
887,86852,1346,11565,1473,1,0,N,N,N,CP_Phys,TT_Task,DT_FixedDrtn,RV_OK,TK_NotStart,B1771,MIR for 25 mm aggregate for Asphalt,,1413,320,20,0,0,0,20,0,0,0,,,,2014-01-04 10:00,2014-01-06 10:00,,2013-06-15 07:00,2013-06-16 17:00,2013-06-15 07:00,2013-06-16 17:00,2013-06-15 07:00,2013-06-16 17:00,,2014-01-04 10:00,2014-01-06 10:00,,PT_Normal,,,,,nxP1/0For0iD2i9VoPW1ug,O+oyg9ZeS4qak4fWxzhllw,,,N,0,0,,,2013-06-23 13:01,2013-06-23 13:01,admin,admin
888,86853,1346,11565,1473,1,0,N,N,N,CP_Phys,TT_Task,DT_FixedDrtn,RV_OK,TK_NotStart,B1781,MAR for 25 mm aggregate for Asphalt,,1423,0,220,0,0,0,220,0,0,0,,,,2013-11-25 10:00,2013-12-25 10:00,,2013-05-05 07:00,2013-06-03 17:00,2013-05-05 07:00,2013-06-03 17:00,2013-05-05 07:00,2013-06-03 17:00,,2013-11-25 10:00,2013-12-25 10:00,,PT_Normal,,,,,VxQPQLzts0iGy8O9+vxXzw,O987XbcwS9u3HekRggoW7w,,,N,0,0,,,2013-06-23 13:01,2013-06-23 13:01,admin,admin
889,86854,1346,11565,1474,1,0,N,N,N,CP_Phys,TT_Task,DT_FixedDrtn,RV_OK,TK_NotStart,B1791,Procurment  for 25 mm aggregate for Asphalt,,2043,10,100,0,0,0,100,0,0,0,,,,2013-12-25 10:00,2014-01-04 10:00,,2013-06-04 07:00,2013-06-13 17:00,2013-06-04 07:00,2013-06-13 17:00,2013-06-04 07:00,2013-06-13 17:00,,2013-12-25 10:00,2014-01-04 10:00,,PT_Normal,,,,,SrqPvxKQ9kmoyyRjRWdc3w,5y4Lg3LLSviB/zl9wdz11A,,,N,0,0,,,2013-06-23 13:01,2013-06-23 13:01,admin,admin
890,86855,1346,11565,1473,1,0,N,N,N,CP_Phys,TT_Task,DT_FixedDrtn,RV_OK,TK_NotStart,B1801,MIR for 20 mm aggregate for Asphalt,,1413,320,20,0,0,0,20,0,0,0,,,,2014-01-04 10:00,2014-01-06 10:00,,2013-06-15 07:00,2013-06-16 17:00,2013-06-15 07:00,2013-06-16 17:00,2013-06-15 07:00,2013-06-16 17:00,,2014-01-04 10:00,2014-01-06 10:00,,PT_Normal,,,,,Xx3zFCnhkUqvrTI7w22yaA,+qLNjruTQZGs6/cXXZpWmg,,,N,0,0,,,2013-06-23 13:01,2013-06-23 13:01,admin,admin
891,86856,1346,11565,1473,1,0,N,N,N,CP_Phys,TT_Task,DT_FixedDrtn,RV_OK,TK_NotStart,B1811,MAR for 20 mm aggregate for Asphalt,,1423,0,220,0,0,0,220,0,0,0,,,,2013-11-25 10:00,2013-12-25 10:00,,2013-05-05 07:00,2013-06-03 17:00,2013-05-05 07:00,2013-06-03 17:00,2013-05-05 07:00,2013-06-03 17:00,,2013-11-25 10:00,2013-12-25 10:00,,PT_Normal,,,,,ebWiN1/v/UW4V+mUu6vW9g,8twxA9pxS86EcrrbYRflGw,,,N,0,0,,,2013-06-23 13:01,2013-06-23 13:01,admin,admin
892,86857,1346,11565,1474,1,0,N,N,N,CP_Phys,TT_Task,DT_FixedDrtn,RV_OK,TK_NotStart,B1821,Procurment  for 20 mm aggregate for Asphalt,,2043,10,100,0,0,0,100,0,0,0,,,,2013-12-25 10:00,2014-01-04 10:00,,2013-06-04 07:00,2013-06-13 17:00,2013-06-04 07:00,2013-06-13 17:00,2013-06-04 07:00,2013-06-13 17:00,,2013-12-25 10:00,2014-01-04 10:00,,PT_Normal,,,,,GyHA0LLmmEmMrphIfGWzIA,dQn2TtMzQ42wWe/taTdVUg,,,N,0,0,,,2013-06-23 13:01,2013-06-23 13:01,admin,admin
893,86858,1346,11565,1473,1,0,N,N,N,CP_Phys,TT_Task,DT_FixedDrtn,RV_OK,TK_NotStart,B1831,MIR for 10 mm aggregate for Asphalt,,1333,320,20,0,0,0,20,0,0,0,,,,2013-12-23 10:00,2013-12-25 10:00,,2013-06-15 07:00,2013-06-16 17:00,2013-06-15 07:00,2013-06-16 17:00,2013-06-15 07:00,2013-06-16 17:00,,2013-12-23 10:00,2013-12-25 10:00,,PT_Normal,,,,,gvfwif0f5kSTUBgn9aL4Aw,cuXXLwQ5QCqMGkN779aooA,,,N,0,0,,,2013-06-23 13:01,2013-06-23 13:01,admin,admin
894,86859,1346,11565,1473,1,0,N,N,N,CP_Phys,TT_Task,DT_FixedDrtn,RV_OK,TK_NotStart,B1841,MAR for 10 mm aggregate for Asphalt,,1330,0,220,0,0,0,220,0,0,0,,,,2013-11-10 07:00,2013-12-11 17:00,,2013-05-05 07:00,2013-06-03 17:00,2013-05-05 07:00,2013-06-03 17:00,2013-05-05 07:00,2013-06-03 17:00,,2013-11-10 07:00,2013-12-11 17:00,,PT_Normal,,,,,Exw6DlIrG02fYoGD9EbkCg,K6gRPt6kQlyNx5oTIpnnzw,,,N,0,0,,,2013-06-23 13:01,2013-06-23 13:01,admin,admin
895,86860,1346,11565,1474,1,0,N,N,N,CP_Phys,TT_Task,DT_FixedDrtn,RV_OK,TK_NotStart,B1851,Procurment  for 10 mm aggregate for Asphalt,,1923,10,100,0,0,0,100,0,0,0,,,,2013-12-13 10:00,2013-12-23 10:00,,2013-06-04 07:00,2013-06-13 17:00,2013-06-04 07:00,2013-06-13 17:00,2013-06-04 07:00,2013-06-13 17:00,,2013-12-13 10:00,2013-12-23 10:00,,PT_Normal,,,,,lPWNG8cGl0G0cTPhteD/kw,NXfgxtzBTgOihSE57RgYAQ,,,N,0,0,,,2013-06-23 13:01,2013-06-23 13:01,admin,admin
896,86861,1346,11565,1473,1,0,N,N,N,CP_Phys,TT_Task,DT_FixedDrtn,RV_OK,TK_NotStart,B1861,MIR for Crushed Sand,,1463,370,20,0,0,0,20,0,0,0,,,,2014-01-04 10:00,2014-01-06 10:00,,2013-06-08 07:00,2013-06-09 17:00,2013-06-08 07:00,2013-06-09 17:00,2013-06-08 07:00,2013-06-09 17:00,,2014-01-04 10:00,2014-01-06 10:00,,PT_Normal,,,,,9cBTZvHkhEi4e6C6JVz7/w,iw7vpkHsRVeLeL9mSRDMFw,,,N,0,0,,,2013-06-23 13:01,2013-06-23 13:01,admin,admin
897,86862,1346,11565,1473,1,0,N,N,N,CP_Phys,TT_Task,DT_FixedDrtn,RV_OK,TK_NotStart,B1871,MAR for Crushed Sand,,1463,0,220,0,0,0,220,0,0,0,,,,2013-12-01 10:00,2013-12-31 10:00,,2013-05-05 07:00,2013-06-03 17:00,2013-05-05 07:00,2013-06-03 17:00,2013-05-05 07:00,2013-06-03 17:00,,2013-12-01 10:00,2013-12-31 10:00,,PT_Normal,,,,,Odm0KzRpE0ihS+ZsgNE5BA,6ewQdp1tR46fQd9mvh6C2Q,,,N,0,0,,,2013-06-23 13:01,2013-06-23 13:01,admin,admin
898,86863,1346,11565,1474,1,0,N,N,N,CP_Phys,TT_Task,DT_FixedDrtn,RV_OK,TK_NotStart,B1881,Procurment  for Crushed Sand,,2103,0,40,0,0,0,40,0,0,0,,,,2013-12-31 10:00,2014-01-04 10:00,,2013-06-04 07:00,2013-06-07 17:00,2013-06-04 07:00,2013-06-07 17:00,2013-06-04 07:00,2013-06-07 17:00,,2013-12-31 10:00,2014-01-04 10:00,,PT_Normal,,,,,VtJod06L+EK+C6qx83yEsg,AwHESjtRQR2LGF/ae01nQg,,,N,0,0,,,2013-06-23 13:01,2013-06-23 13:01,admin,admin
899,86864,1346,11565,1473,1,0,N,N,N,CP_Phys,TT_Task,DT_FixedDrtn,RV_OK,TK_NotStart,B1891,MIR for Aggregate Base Course Class - A,,1303,210,20,0,0,0,20,0,0,0,,,,2013-12-30 10:00,2014-01-01 10:00,,2013-06-25 07:00,2013-06-26 17:00,2013-06-25 07:00,2013-06-26 17:00,2013-06-25 07:00,2013-06-26 17:00,,2013-12-30 10:00,2014-01-01 10:00,,PT_Normal,,,,,GRE1ffwHkEG48eM60WTbGA,xL9AFNlBTjO6L3/c8PHqZg,,,N,0,0,,,2013-06-23 13:01,2013-06-23 13:01,admin,admin
900,86865,1346,11565,1473,1,0,N,N,N,CP_Phys,TT_Task,DT_FixedDrtn,RV_OK,TK_NotStart,B1901,MAR for Aggregate Base Course Class - A,,1303,0,220,0,0,0,220,0,0,0,,,,2013-11-05 10:00,2013-12-09 10:00,,2013-05-05 07:00,2013-06-03 17:00,2013-05-05 07:00,2013-06-03 17:00,2013-05-05 07:00,2013-06-03 17:00,,2013-11-05 10:00,2013-12-09 10:00,,PT_Normal,,,,,+mXGCL5Z1EyQoGycMQDZIw,gBu3o8W7QY2bTqxNF7QQXw,,,N,0,0,,,2013-06-23 13:01,2013-06-23 13:01,admin,admin
901,86866,1346,11565,1474,1,0,N,N,N,CP_Phys,TT_Task,DT_FixedDrtn,RV_OK,TK_NotStart,B1911,Procurment  for Aggregate Base Course Class - A,,1883,0,210,0,0,0,210,0,0,0,,,,2013-12-09 10:00,2013-12-30 10:00,,2013-06-04 07:00,2013-06-24 17:00,2013-06-04 07:00,2013-06-24 17:00,2013-06-04 07:00,2013-06-24 17:00,,2013-12-09 10:00,2013-12-30 10:00,,PT_Normal,,,,,36JuWMx0vkOukC3ZBVtKFg,MtEQ3eIpQ460rbuaR2vlqQ,,,N,0,0,,,2013-06-23 13:01,2013-06-23 13:01,admin,admin
902,86867,1346,11565,1473,1,0,N,N,N,CP_Phys,TT_Task,DT_FixedDrtn,RV_OK,TK_NotStart,B1921,MIR for Sub-Base Material Class B,,1283,190,20,0,0,0,20,0,0,0,,,,2013-12-16 10:00,2013-12-18 10:00,,2013-06-15 07:00,2013-06-16 17:00,2013-06-15 07:00,2013-06-16 17:00,2013-06-15 07:00,2013-06-16 17:00,,2013-12-16 10:00,2013-12-18 10:00,,PT_Normal,,,,,39AP2E/DNkGql3bJjUm0hQ,3E34roFrQPy1xITTq5QR/A,,,N,0,0,,,2013-06-23 13:01,2013-06-23 13:01,admin,admin
903,86868,1346,11565,1473,1,0,N,N,N,CP_Phys,TT_Task,DT_FixedDrtn,RV_OK,TK_NotStart,B1931,MAR for Sub-Base Material Class B,,1280,0,220,0,0,0,220,0,0,0,,,,2013-11-03 07:00,2013-12-04 17:00,,2013-05-05 07:00,2013-06-03 17:00,2013-05-05 07:00,2013-06-03 17:00,2013-05-05 07:00,2013-06-03 17:00,,2013-11-03 07:00,2013-12-04 17:00,,PT_Normal,,,,,HDRIOLH+IkiPWOKSMh0x0A,YWWh7RISQ0uQl6ks3fwx3w,,,N,0,0,,,2013-06-23 13:01,2013-06-23 13:01,admin,admin
904,86869,1346,11565,1474,1,0,N,N,N,CP_Phys,TT_Task,DT_FixedDrtn,RV_OK,TK_NotStart,B1941,Procurment  for Sub-Base Material Class B,,1853,10,100,0,0,0,100,0,0,0,,,,2013-12-06 10:00,2013-12-16 10:00,,2013-06-04 07:00,2013-06-13 17:00,2013-06-04 07:00,2013-06-13 17:00,2013-06-04 07:00,2013-06-13 17:00,,2013-12-06 10:00,2013-12-16 10:00,,PT_Normal,,,,,p7YU2fnlv0SfBxtmHnMMLQ,4XrzQ9WGRyuCJuH3aH9T/A,,,N,0,0,,,2013-06-23 13:01,2013-06-23 13:01,admin,admin
905,86870,1346,11565,1473,1,0,N,N,N,CP_Phys,TT_Task,DT_FixedDrtn,RV_OK,TK_NotStart,OCEC10911,Precast Concrete Curb,2981,1093,0,40,0,1240,1240,40,0,0,0,,,,2013-12-28 10:00,2014-01-01 10:00,,2013-07-22 07:00,2013-07-27 17:00,2013-07-22 07:00,2013-07-27 17:00,2013-07-22 07:00,2013-07-27 17:00,,2013-12-28 10:00,2014-01-01 10:00,,PT_Normal,,,,,npqT39Pk4kqxt98dcYf1BA,V866nVxqQcGWvTmT5Q7U2Q,,,N,0,0,,,2013-06-23 13:01,2013-06-23 13:01,admin,admin
906,86871,1346,11565,1473,1,0,N,N,N,CP_Phys,TT_Task,DT_FixedDrtn,RV_OK,TK_NotStart,B1602,Prepartion & Submission for Subgrade Material,,1233,0,80,0,0,0,80,0,0,0,,,,2013-10-15 10:00,2013-10-27 10:00,,2013-04-23 07:00,2013-05-04 17:00,2013-04-23 07:00,2013-05-04 17:00,2013-04-23 07:00,2013-05-04 17:00,,2013-10-15 10:00,2013-10-27 10:00,,PT_Normal,,,,,AOW4vSwxHUeYtG0dCJrFSA,ZFEWuUcqjkCMoIyvUYJFuA,,,N,0,0,,,2013-06-23 13:01,2013-06-23 13:01,admin,admin
907,86872,1346,11565,1473,1,0,N,N,N,CP_Phys,TT_Task,DT_FixedDrtn,RV_OK,TK_NotStart,B1632,Prepartion & Submission for Bituminous Base Course,,1403,0,80,0,0,0,80,0,0,0,,,,2013-11-09 10:00,2013-11-23 10:00,,2013-04-23 07:00,2013-05-04 17:00,2013-04-23 07:00,2013-05-04 17:00,2013-04-23 07:00,2013-05-04 17:00,,2013-11-09 10:00,2013-11-23 10:00,,PT_Normal,,,,,e8Y/MNVifE6robTcmVH7Zg,SRnF6BaiH0u1lHNzyt8m8A,,,N,0,0,,,2013-06-23 13:01,2013-06-23 13:01,admin,admin
908,86873,1346,11565,1473,1,0,N,N,N,CP_Phys,TT_Task,DT_FixedDrtn,RV_OK,TK_NotStart,B1662,Prepartion & Submission for Bituminous Wearing Course,,1419,0,80,0,0,0,80,0,0,0,,,,2013-11-10 16:00,2013-11-24 16:00,,2013-04-23 07:00,2013-05-04 17:00,2013-04-23 07:00,2013-05-04 17:00,2013-04-23 07:00,2013-05-04 17:00,,2013-11-10 16:00,2013-11-24 16:00,,PT_Normal,,,,,HqqjIKmv8keujyR/53gWLw,REpapu/vwU+Ll2AkQJ7PFA,,,N,0,0,,,2013-06-23 13:01,2013-06-23 13:01,admin,admin
909,86874,1346,11565,1473,1,0,N,N,N,CP_Phys,TT_Task,DT_FixedDrtn,RV_OK,TK_NotStart,B1692,Prepartion & Submission for Prime Coat - MC - 70,,1403,0,80,0,0,0,80,0,0,0,,,,2013-11-09 10:00,2013-11-23 10:00,,2013-04-23 07:00,2013-05-04 17:00,2013-04-23 07:00,2013-05-04 17:00,2013-04-23 07:00,2013-05-04 17:00,,2013-11-09 10:00,2013-11-23 10:00,,PT_Normal,,,,,sp/GQlC4jUG+KsO0l8PBwg,6IwqCaXmhUq6Z8MzgRmohw,,,N,0,0,,,2013-06-23 13:01,2013-06-23 13:01,admin,admin
910,86875,1346,11565,1473,1,0,N,N,N,CP_Phys,TT_Task,DT_FixedDrtn,RV_OK,TK_NotStart,B1722,Prepartion & Submission for Tack Coat - SS - 1 H,,800,0,80,0,0,0,80,0,0,0,,,,2013-08-17 07:00,2013-08-26 17:00,,2013-04-23 07:00,2013-05-04 17:00,2013-04-23 07:00,2013-05-04 17:00,2013-04-23 07:00,2013-05-04 17:00,,2013-08-17 07:00,2013-08-26 17:00,,PT_Normal,,,,,6qgROO40aESq0I1mqy4TVw,5BPMpJiDlkS6Cv7kCWR58Q,,,N,0,0,,,2013-06-23 13:01,2013-06-23 13:01,admin,admin
911,86876,1346,11565,1473,1,0,N,N,N,CP_Phys,TT_Task,DT_FixedDrtn,RV_OK,TK_NotStart,B1752,Prepartion & Submission for Bitumen 60-70,,1423,0,80,0,0,0,80,0,0,0,,,,2013-11-11 10:00,2013-11-25 10:00,,2013-04-23 07:00,2013-05-04 17:00,2013-04-23 07:00,2013-05-04 17:00,2013-04-23 07:00,2013-05-04 17:00,,2013-11-11 10:00,2013-11-25 10:00,,PT_Normal,,,,,3TSw5MJAYkee+5wUk5+asA,K12FJDczcEmWmvTiqnG/Jw,,,N,0,0,,,2013-06-23 13:01,2013-06-23 13:01,admin,admin
912,86877,1346,11565,1473,1,0,N,N,N,CP_Phys,TT_Task,DT_FixedDrtn,RV_OK,TK_NotStart,B1782,Prepartion & Submission for 25 mm aggregate for Asphalt,,1423,0,80,0,0,0,80,0,0,0,,,,2013-11-11 10:00,2013-11-25 10:00,,2013-04-23 07:00,2013-05-04 17:00,2013-04-23 07:00,2013-05-04 17:00,2013-04-23 07:00,2013-05-04 17:00,,2013-11-11 10:00,2013-11-25 10:00,,PT_Normal,,,,,+ytqXW1LnEmCNBF1HZpCFw,c3dTaWxg5Uu/H7lukUcgLA,,,N,0,0,,,2013-06-23 13:01,2013-06-23 13:01,admin,admin
913,86878,1346,11565,1473,1,0,N,N,N,CP_Phys,TT_Task,DT_FixedDrtn,RV_OK,TK_NotStart,B1812,Prepartion & Submission for 20 mm aggregate for Asphalt,,1423,0,80,0,0,0,80,0,0,0,,,,2013-11-11 10:00,2013-11-25 10:00,,2013-04-23 07:00,2013-05-04 17:00,2013-04-23 07:00,2013-05-04 17:00,2013-04-23 07:00,2013-05-04 17:00,,2013-11-11 10:00,2013-11-25 10:00,,PT_Normal,,,,,E248K+alGkuuV59WBMzblw,uehTn8bAa0a9A3ifao5Vdw,,,N,0,0,,,2013-06-23 13:01,2013-06-23 13:01,admin,admin
914,86879,1346,11565,1473,1,0,N,N,N,CP_Phys,TT_Task,DT_FixedDrtn,RV_OK,TK_NotStart,B1842,Prepartion & Submission for 10 mm aggregate for Asphalt,,1330,0,80,0,0,0,80,0,0,0,,,,2013-10-29 07:00,2013-11-09 17:00,,2013-04-23 07:00,2013-05-04 17:00,2013-04-23 07:00,2013-05-04 17:00,2013-04-23 07:00,2013-05-04 17:00,,2013-10-29 07:00,2013-11-09 17:00,,PT_Normal,,,,,z2EXu/kDRkmPA9N19oRUag,B7KI8hdmdkSHNfumnr6qOw,,,N,0,0,,,2013-06-23 13:01,2013-06-23 13:01,admin,admin
915,86880,1346,11565,1473,1,0,N,N,N,CP_Phys,TT_Task,DT_FixedDrtn,RV_OK,TK_NotStart,B1872,Prepartion & Submission for Crushed Sand,,1463,0,80,0,0,0,80,0,0,0,,,,2013-11-17 10:00,2013-12-01 10:00,,2013-04-23 07:00,2013-05-04 17:00,2013-04-23 07:00,2013-05-04 17:00,2013-04-23 07:00,2013-05-04 17:00,,2013-11-17 10:00,2013-12-01 10:00,,PT_Normal,,,,,fRQUjaOgL0unwm0MfNz6lg,CMHGLeMmE0S0V7N6b5QOBw,,,N,0,0,,,2013-06-23 13:01,2013-06-23 13:01,admin,admin
916,86881,1346,11565,1473,1,0,N,N,N,CP_Phys,TT_Task,DT_FixedDrtn,RV_OK,TK_NotStart,B1902,Prepartion & Submission for Aggregate Base Course Class - A,,1303,0,80,0,0,0,80,0,0,0,,,,2013-10-26 10:00,2013-11-05 10:00,,2013-04-23 07:00,2013-05-04 17:00,2013-04-23 07:00,2013-05-04 17:00,2013-04-23 07:00,2013-05-04 17:00,,2013-10-26 10:00,2013-11-05 10:00,,PT_Normal,,,,,LZP1Lv3+GEWh+cZOzZn3ew,le70Fea+9E2bXO4VoXXh+g,,,N,0,0,,,2013-06-23 13:01,2013-06-23 13:01,admin,admin
917,86882,1346,11565,1473,1,0,N,N,N,CP_Phys,TT_Task,DT_FixedDrtn,RV_OK,TK_NotStart,B1932,Prepartion & Submission for Sub-Base Material Class B,,1280,0,80,0,0,0,80,0,0,0,,,,2013-10-22 07:00,2013-11-02 17:00,,2013-04-23 07:00,2013-05-04 17:00,2013-04-23 07:00,2013-05-04 17:00,2013-04-23 07:00,2013-05-04 17:00,,2013-10-22 07:00,2013-11-02 17:00,,PT_Normal,,,,,J3MRr29VmE6igRg4sGFOLQ,bV1CS64Rn0qffR1PVOHEVA,,,N,0,0,,,2013-06-23 13:01,2013-06-23 13:01,admin,admin
918,86883,1346,11566,1473,1,100,N,N,N,CP_Phys,TT_Task,DT_FixedDrtn,RV_OK,TK_Complete,OCEC10791,Setting out and route survey,2983,,,0,80,0,80,40,40,40,0,,2013-02-12 00:00,2013-02-18 00:00,2013-09-29 16:00,2013-09-29 16:00,,2013-06-23 17:00,2013-06-23 17:00,,,2013-05-26 16:00,2013-06-01 16:00,,,,,PT_Normal,,,,,ElFK5Y1DGk+TopauraBn6Q,JoEuHO/oRGyJ1L1UGyPBLQ,,,N,80,40,,,2013-06-23 13:01,2013-06-23 13:01,admin,admin
919,86884,1346,11566,1473,1,40,N,N,N,CP_Phys,TT_Task,DT_FixedDrtn,RV_OK,TK_Active,OCEC10801,Trench excavation,2984,719,0,120,0,1320,1320,120,600,0,600,,2013-02-19 00:00,,2013-10-05 16:00,2013-10-21 16:00,,2013-06-24 07:00,2013-07-09 17:00,2013-06-24 07:00,2013-07-09 17:00,2013-06-01 16:00,2013-06-17 16:00,,2013-10-05 16:00,2013-10-21 16:00,,PT_Normal,,,,,lnvrrd43xkGsd58WpEky4A,yJPTKCFXRc2TxJf3eNskwg,,,N,0,0,,,2013-06-23 13:01,2013-06-23 13:01,admin,admin
920,86885,1346,11566,1473,1,30,N,N,N,CP_Phys,TT_Task,DT_FixedDrtn,RV_OK,TK_Active,OCEC10811,"Bedding, Compaction and Levelling",2984,819,0,60,0,1020,1020,60,480,0,480,,2013-03-02 00:00,,2013-10-19 16:00,2013-10-27 16:00,,2013-06-24 07:00,2013-07-01 17:00,2013-06-24 07:00,2013-07-01 17:00,2013-06-09 16:00,2013-06-17 16:00,,2013-10-19 16:00,2013-10-27 16:00,,PT_Normal,,,,,5lWCsmRIz0KTrsW58WgXqw,/squI8GFQ9OA+5akGcXIJQ,,,N,0,0,,,2013-06-23 13:01,2013-06-23 13:01,admin,admin
921,86886,1346,11566,1473,1,0,N,N,N,CP_Phys,TT_Task,DT_FixedDrtn,RV_OK,TK_NotStart,OCEC10821,Pipe lowering,2971,719,0,80,0,1840,1840,80,160,0,160,,,,2013-12-14 16:00,2013-12-24 16:00,,2013-09-02 07:00,2013-09-11 17:00,2013-09-02 07:00,2013-09-11 17:00,2013-09-02 07:00,2013-09-11 17:00,,2013-12-14 16:00,2013-12-24 16:00,,PT_Normal,,,,,SZyUVzkuI0mFDkY4VAzrYQ,CF/uqbTsRs+A7puFttAlMg,,,N,0,0,,,2013-06-23 13:01,2013-06-23 13:01,admin,admin
922,86887,1346,11566,1473,1,0,N,N,N,CP_Phys,TT_Task,DT_FixedDrtn,RV_OK,TK_NotStart,OCEC10831,Pipe joining,2971,719,0,80,0,960,960,80,80,0,80,,,,2013-12-18 16:00,2013-12-30 16:00,,2013-09-08 07:00,2013-09-17 17:00,2013-09-08 07:00,2013-09-17 17:00,2013-09-08 07:00,2013-09-17 17:00,,2013-12-18 16:00,2013-12-30 16:00,,PT_Normal,,,,,FDceSoGnt02VlD//56pOSQ,KfIPQ9hhSRCwFOX6UEZUaw,,,N,0,0,,,2013-06-23 13:01,2013-06-23 13:01,admin,admin
923,86888,1346,11566,1473,1,0,N,N,N,CP_Phys,TT_Task,DT_FixedDrtn,RV_OK,TK_NotStart,OCEC10891,Backfilling and Compaction,3001,719,0,80,0,1120,1120,80,560,0,560,,,,2013-12-30 16:00,2014-01-11 16:00,,2013-09-18 07:00,2013-09-29 17:00,2013-09-18 07:00,2013-09-29 17:00,2013-09-18 07:00,2013-09-29 17:00,,2013-12-30 16:00,2014-01-11 16:00,,PT_Normal,,,,,wtUOKE3hBEayHgIsbirYfA,A1xYh03fT4yNkIx43teqcg,,,N,0,0,,,2013-06-23 13:01,2013-06-23 13:01,admin,admin
924,86889,1346,11566,1473,1,0,N,N,N,CP_Phys,TT_Task,DT_FixedDrtn,RV_OK,TK_NotStart,OCEC10841,Construction of Catch Pits and hook up,2981,819,100,250,0,4750,4750,250,0,0,0,,,,2013-11-02 16:00,2013-12-09 16:00,,2013-07-08 07:00,2013-08-13 17:00,2013-07-08 07:00,2013-08-13 17:00,2013-07-08 07:00,2013-08-13 17:00,,2013-11-02 16:00,2013-12-09 16:00,,PT_Normal,,,,,37youg1EEUOgcifvkCkcqg,xCAZ8ItTSduJSv1zP1+Arw,,,N,0,0,,,2013-06-23 13:01,2013-06-23 13:01,admin,admin
925,86890,1346,11566,1473,1,0,N,N,N,CP_Phys,TT_Task,DT_FixedDrtn,RV_OK,TK_NotStart,OCEC10861,Inspection and Testing,2971,719,40,40,0,80,80,40,0,0,0,,,,2014-01-11 16:00,2014-01-15 16:00,,2013-09-30 07:00,2013-10-05 17:00,2013-09-30 07:00,2013-10-05 17:00,2013-09-30 07:00,2013-10-05 17:00,,2014-01-11 16:00,2014-01-15 16:00,,PT_Normal,,,,,jc3NGQ0xcEWTGmbVHyUIVQ,X5kXUfveTR25u78gUHEYJQ,,,N,0,0,,,2013-06-23 13:01,2013-06-23 13:01,admin,admin
926,86891,1346,11566,1473,1,0,N,N,N,CP_Phys,TT_Task,DT_FixedDrtn,RV_OK,TK_NotStart,OCEC18241,Construction of Grate Opennings,2981,719,0,60,0,960,960,60,0,0,0,,,,2013-12-09 16:00,2013-12-17 16:00,,2013-08-28 07:00,2013-09-04 17:00,2013-08-28 07:00,2013-09-04 17:00,2013-08-28 07:00,2013-09-04 17:00,,2013-12-09 16:00,2013-12-17 16:00,,PT_Normal,,,,,aKuGxlaGJ0KlAHG4Mo38hg,fyilH40XTkqIr7RtGBic+Q,,,N,0,0,,,2013-06-23 13:01,2013-06-23 13:01,admin,admin
927,86892,1346,11566,1473,1,0,N,N,N,CP_Phys,TT_Task,DT_FixedDrtn,RV_OK,TK_NotStart,OCEC18251,Pipe Culvert Construction,2981,819,0,100,0,1300,1300,100,0,0,0,,,,2013-10-19 16:00,2013-11-02 16:00,,2013-06-24 07:00,2013-07-07 17:00,2013-06-24 07:00,2013-07-07 17:00,2013-06-24 07:00,2013-07-07 17:00,,2013-10-19 16:00,2013-11-02 16:00,,PT_Normal,,,,,gdqeAmk78k+QrVe8MPeWzA,/ljV+d7KSfOa8VYSeIqKLg,,,N,0,0,,,2013-06-23 13:01,2013-06-23 13:01,admin,admin
928,86893,1346,11566,1473,1,0,N,N,N,CP_Phys,TT_Task,DT_FixedDrtn,RV_OK,TK_NotStart,OCEC18261,Installation of Grated Channels,2971,719,0,250,0,2000,2000,250,250,0,250,,,,2013-11-02 16:00,2013-12-09 16:00,,2013-07-22 07:00,2013-08-27 17:00,2013-07-22 07:00,2013-08-27 17:00,2013-07-22 07:00,2013-08-27 17:00,,2013-11-02 16:00,2013-12-09 16:00,,PT_Normal,,,,,eA8r0gGTQkmddh/WZSe1TQ,8OGO+fMGT+eEStFWcOidzQ,,,N,0,0,,,2013-06-23 13:01,2013-06-23 13:01,admin,admin
929,86894,1346,11566,1473,1,0,N,N,N,CP_Phys,TT_Task,DT_FixedDrtn,RV_OK,TK_NotStart,A15073,Prepare and Submit Method Statment for Culvert Laying,,789,0,140,0,0,0,140,0,0,0,,,,2013-08-13 16:00,2013-09-02 16:00,,2013-04-23 07:00,2013-05-12 17:00,2013-04-23 07:00,2013-05-12 17:00,2013-04-23 07:00,2013-05-12 17:00,,2013-08-13 16:00,2013-09-02 16:00,,PT_Normal,,,,,cW454FQ44UWEFurrdw2gBQ,q1Tv2ULkTGS/nrBzs+wnQQ,,,N,0,0,,,2013-06-23 13:01,2013-06-23 13:01,admin,admin
930,86895,1346,11566,1473,1,0,N,N,N,CP_Phys,TT_Task,DT_FixedDrtn,RV_OK,TK_NotStart,A15074,Review and approval for Method Statment for Culvert Laying,,979,160,140,0,0,0,140,0,0,0,,,,2013-09-29 16:00,2013-10-19 16:00,,2013-05-13 07:00,2013-06-01 17:00,2013-05-13 07:00,2013-06-01 17:00,2013-05-13 07:00,2013-06-01 17:00,,2013-09-29 16:00,2013-10-19 16:00,,PT_Normal,,,,,Hhb62s8bOESHwD8uBPfD5A,0PJnY6O5Rq6lqXwBDqYL3Q,,,N,0,0,,,2013-06-23 13:01,2013-06-23 13:01,admin,admin
931,86896,1346,11566,1473,1,0,N,N,N,CP_Phys,TT_Task,DT_FixedDrtn,RV_OK,TK_NotStart,A15075,Prepare and Submit Method Statment for Catch Pits,,789,0,140,0,0,0,140,0,0,0,,,,2013-08-18 16:00,2013-09-07 16:00,,2013-04-28 07:00,2013-05-15 17:00,2013-04-28 07:00,2013-05-15 17:00,2013-04-28 07:00,2013-05-15 17:00,,2013-08-18 16:00,2013-09-07 16:00,,PT_Normal,,,,,9NTGUXibn0yWyHbLPSDnUA,nJMBDWU2QYqFC0trwqNq8A,,,N,0,0,,,2013-06-23 13:01,2013-06-23 13:01,admin,admin
932,86897,1346,11566,1473,1,0,N,N,N,CP_Phys,TT_Task,DT_FixedDrtn,RV_OK,TK_NotStart,A15076,Review and approval for Method Statment for Catch Pits,,1049,230,140,0,0,0,140,0,0,0,,,,2013-10-13 16:00,2013-11-02 16:00,,2013-05-18 07:00,2013-06-04 17:00,2013-05-18 07:00,2013-06-04 17:00,2013-05-18 07:00,2013-06-04 17:00,,2013-10-13 16:00,2013-11-02 16:00,,PT_Normal,,,,,ZdcspgIUgk67Dzeul3mG1Q,W8dyQfE2SPiYT7XFytfGfw,,,N,0,0,,,2013-06-23 13:01,2013-06-23 13:01,admin,admin
933,86898,1346,11566,1473,1,0,N,N,N,CP_Phys,TT_Task,DT_FixedDrtn,RV_OK,TK_NotStart,B2791,MIR for HDPE manholes,,719,0,20,0,0,0,20,0,0,0,,,,2013-10-29 16:00,2013-11-02 16:00,,2013-07-20 07:00,2013-07-21 17:00,2013-07-20 07:00,2013-07-21 17:00,2013-07-20 07:00,2013-07-21 17:00,,2013-10-29 16:00,2013-11-02 16:00,,PT_Normal,,,,,uFesNx9eK06xUxlRqxPBSA,Wx/jTsZJRXO6ibHDNkPZig,,,N,0,0,,,2013-06-23 13:01,2013-06-23 13:01,admin,admin
934,86899,1346,11566,1473,1,0,N,N,N,CP_Phys,TT_Task,DT_FixedDrtn,RV_OK,TK_NotStart,B2801,MAR for HDPE manholes,,709,0,220,0,0,0,220,0,0,0,,,,2013-08-13 16:00,2013-09-14 16:00,,2013-05-05 07:00,2013-06-03 17:00,2013-05-05 07:00,2013-06-03 17:00,2013-05-05 07:00,2013-06-03 17:00,,2013-08-13 16:00,2013-09-14 16:00,,PT_Normal,,,,,s6NMTsrXdkaYHH5v/n2hAA,PUiz8ujrRaaISbxuQxKIpQ,,,N,0,0,,,2013-06-23 13:01,2013-06-23 13:01,admin,admin
935,86900,1346,11566,1474,1,0,N,N,N,CP_Phys,TT_Task,DT_FixedDrtn,RV_OK,TK_NotStart,B2811,Procurment  for HDPE manholes,,1029,10,450,0,0,0,450,0,0,0,,,,2013-09-14 16:00,2013-10-29 16:00,,2013-06-04 07:00,2013-07-18 17:00,2013-06-04 07:00,2013-07-18 17:00,2013-06-04 07:00,2013-07-18 17:00,,2013-09-14 16:00,2013-10-29 16:00,,PT_Normal,,,,,2mHf95XlW0CJr42YVbqJvQ,irPi6EbdQRassPjj9+MrPw,,,N,0,0,,,2013-06-23 13:01,2013-06-23 13:01,admin,admin
936,86901,1346,11566,1473,1,0,N,N,N,CP_Phys,TT_Task,DT_FixedDrtn,RV_OK,TK_NotStart,B2821,MIR for Gulley Grate and Frame,,919,200,20,0,0,0,20,0,0,0,,,,2013-10-29 16:00,2013-11-02 16:00,,2013-06-22 07:00,2013-06-23 17:00,2013-06-22 07:00,2013-06-23 17:00,2013-06-22 07:00,2013-06-23 17:00,,2013-10-29 16:00,2013-11-02 16:00,,PT_Normal,,,,,gjTO05m4xE+BjNUtgCCwAw,hfFpd0hHSgSRNpzqwqoDMA,,,N,0,0,,,2013-06-23 13:01,2013-06-23 13:01,admin,admin
937,86902,1346,11566,1473,1,80,N,N,N,CP_Phys,TT_Task,DT_FixedDrtn,RV_OK,TK_Active,B2831,MAR for Gulley Grate and Frame,,900,0,0,0,0,0,220,0,0,0,,2013-02-20 00:00,,2013-08-28 17:00,2013-08-28 17:00,,2013-04-23 07:00,2013-04-23 07:00,2013-04-23 07:00,2013-04-23 07:00,2013-02-19 16:00,2013-03-23 16:00,,2013-08-28 17:00,2013-08-28 17:00,,PT_Normal,,,,,euFGvZRl3kudQwH5ynmm/w,0lvfhoCXQleLpTuYxOmBFQ,,,N,0,0,,,2013-06-23 13:01,2013-06-23 13:01,admin,admin
938,86903,1346,11566,1474,1,0,N,N,N,CP_Phys,TT_Task,DT_FixedDrtn,RV_OK,TK_NotStart,B2841,Procurment  for Gulley Grate and Frame,,1299,0,600,0,0,0,600,0,0,0,,,,2013-08-30 16:00,2013-10-29 16:00,,2013-04-23 07:00,2013-06-21 17:00,2013-04-23 07:00,2013-06-21 17:00,2013-04-23 07:00,2013-06-21 17:00,,2013-08-30 16:00,2013-10-29 16:00,,PT_Normal,,,,,v1EeFpvHbka/mrwuwJ+Vhg,uXgTKXqKSHuLgrXr0WFpdg,,,N,0,0,,,2013-06-23 13:01,2013-06-23 13:01,admin,admin
939,86904,1346,11566,1473,1,0,N,N,N,CP_Phys,TT_Task,DT_FixedDrtn,RV_OK,TK_NotStart,B2911,MIR for Reinforced Precast Concrete Pipe (1000 mm),,549,0,20,0,0,0,20,0,0,0,,,,2013-09-08 16:00,2013-09-10 16:00,,2013-06-22 07:00,2013-06-23 17:00,2013-06-22 07:00,2013-06-23 17:00,2013-06-22 07:00,2013-06-23 17:00,,2013-09-08 16:00,2013-09-10 16:00,,PT_Normal,,,,,bI2G9saLxkOZrcC8Dqmd7g,oNgZj4fsQjie0iQ1ZmD7TA,,,N,0,0,,,2013-06-23 13:01,2013-06-23 13:01,admin,admin
940,86905,1346,11566,1473,1,100,N,N,N,CP_Phys,TT_Task,DT_FixedDrtn,RV_OK,TK_Complete,B2921,MAR for Reinforced Precast Concrete Pipe (1000 mm),,,,0,0,0,0,220,0,0,0,,2013-03-13 00:00,2013-04-13 00:00,2013-07-10 16:00,2013-07-10 16:00,,2013-04-23 00:00,2013-04-23 00:00,,,2013-02-03 16:00,2013-03-05 16:00,,,,,PT_Normal,,,,,RBE+GMhikU67Jbe4sY4Qgw,cjta+/CURvCyWwwwqsK0jg,,,N,0,0,,,2013-06-23 13:01,2013-06-23 13:01,admin,admin
941,86906,1346,11566,1474,1,0,N,N,N,CP_Phys,TT_Task,DT_FixedDrtn,RV_OK,TK_NotStart,B2931,Procurment  for Reinforced Precast Concrete Pipe (1000 mm),,789,0,600,0,0,0,600,0,0,0,,,,2013-07-10 16:00,2013-09-08 16:00,,2013-04-23 07:00,2013-06-21 17:00,2013-04-23 07:00,2013-06-21 17:00,2013-04-23 07:00,2013-06-21 17:00,,2013-07-10 16:00,2013-09-08 16:00,,PT_Normal,,,,,kYemrSBmg0KW3Jh97FfxPA,TRo92ABzTCO3+tELxWcnKw,,,N,0,0,,,2013-06-23 13:01,2013-06-23 13:01,admin,admin
942,86907,1346,11566,1473,1,100,N,N,N,CP_Phys,TT_Task,DT_FixedDrtn,RV_OK,TK_Complete,B3371,MAR for Storm Sewer HDPE (400 mm Diameter),,,,0,0,0,0,220,0,0,0,,2013-01-28 00:00,2013-02-27 00:00,2013-09-10 16:00,2013-09-10 16:00,,2013-04-23 00:00,2013-04-23 00:00,,,2013-02-11 16:00,2013-03-13 16:00,,,,,PT_Normal,,,,,TipIusMkKkSYRYBCNg4PTA,aA/aP3n6SHW3zt0uXbFOSw,,,N,0,0,,,2013-06-23 13:01,2013-06-23 13:01,admin,admin
943,86908,1346,11566,1474,1,100,N,N,N,CP_Phys,TT_Task,DT_FixedDrtn,RV_OK,TK_Complete,B3381,Procurment  for Storm Sewer HDPE (400 mm Diameter),,,,0,0,0,0,600,0,0,0,,2013-02-27 00:00,2013-03-21 00:00,2013-09-10 16:00,2013-09-10 16:00,,2013-04-23 00:00,2013-04-23 00:00,,,2013-02-21 07:00,2013-04-21 17:00,,,,,PT_Normal,,,,,+XIv1taIrUin3rFW6d7vUA,ctmJkq3GRQqG50a8WfpIyg,,,N,0,0,,,2013-06-23 13:01,2013-06-23 13:01,admin,admin
944,86909,1346,11566,1473,1,100,N,N,N,CP_Phys,TT_Task,DT_FixedDrtn,RV_OK,TK_Complete,B3391,MIR for Storm Sewer AC (400 mm Diameter),,,,0,0,0,0,20,0,0,0,,2013-03-21 00:00,2013-03-21 00:00,2013-09-10 16:00,2013-09-10 16:00,,2013-04-23 00:00,2013-04-23 00:00,,,2013-04-17 07:00,2013-04-20 17:00,,,,,PT_Normal,,,,,7ZoU8WsJC02S3+zWeeza0A,iPyBbqFdQtqz+81jtQtW5w,,,N,0,0,,,2013-06-23 13:01,2013-06-23 13:01,admin,admin
945,86910,1346,11566,1473,1,100,N,N,N,CP_Phys,TT_Task,DT_FixedDrtn,RV_OK,TK_Complete,B3372,Prepartion & Submission for Storm Sewer HDPE (400 mm Diameter),,,,0,0,0,0,80,0,0,0,,2013-02-26 00:00,2013-03-10 00:00,2013-09-10 16:00,2013-09-10 16:00,,2013-04-23 00:00,2013-04-23 00:00,,,2013-02-11 16:00,2013-02-23 16:00,,,,,PT_Normal,,,,,uiS5VwuaTkGzgjJgFNYnGA,umFZSwsrTkqYYdkuKr4Ogg,,,N,0,0,,,2013-06-23 13:01,2013-06-23 13:01,admin,admin
946,86911,1346,11566,1473,1,100,N,N,N,CP_Phys,TT_Task,DT_FixedDrtn,RV_OK,TK_Complete,B2832,Prepartion & Submission for Gulley Grate and Frame,,,,0,0,0,0,80,0,0,0,,2013-02-10 00:00,2013-02-20 00:00,2013-08-28 17:00,2013-08-28 17:00,,2013-04-23 00:00,2013-04-23 00:00,,,2013-02-19 16:00,2013-03-03 16:00,,,,,PT_Normal,,,,,Bd3fyIF9z0uEdfyHpwk3PA,9CQcWfMhK0iyZTWOmA6tdQ,,,N,0,0,,,2013-06-23 13:01,2013-06-23 13:01,admin,admin
947,86912,1346,11566,1473,1,100,N,N,N,CP_Phys,TT_Task,DT_FixedDrtn,RV_OK,TK_Complete,B2922,Prepartion & Submission for Reinforced Precast Concrete Pipe (1000 mm),,,,0,0,0,0,80,0,0,0,,2013-03-13 00:00,2013-04-13 00:00,2013-07-10 16:00,2013-07-10 16:00,,2013-04-23 00:00,2013-04-23 00:00,,,2013-02-03 16:00,2013-02-13 16:00,,,,,PT_Normal,,,,,LU7RVW4EcEaCLsihKX483Q,G94/sNE390CROdK44X2UkQ,,,N,0,0,,,2013-06-23 13:01,2013-06-23 13:01,admin,admin
948,86913,1346,11566,1473,1,0,N,N,N,CP_Phys,TT_Task,DT_FixedDrtn,RV_OK,TK_NotStart,B2802,Prepartion & Submission for HDPE manholes,,709,0,80,0,0,0,80,0,0,0,,,,2013-07-30 16:00,2013-08-13 16:00,,2013-04-23 07:00,2013-05-04 17:00,2013-04-23 07:00,2013-05-04 17:00,2013-04-23 07:00,2013-05-04 17:00,,2013-07-30 16:00,2013-08-13 16:00,,PT_Normal,,,,,AD/2j60HO0e5OSNTC3S6IQ,J0DWtzsDJEGEwoAxY8MV7w,,,N,0,0,,,2013-06-23 13:01,2013-06-23 13:01,admin,admin
949,86914,1346,11552,1473,1,0,N,N,N,CP_Phys,TT_Task,DT_FixedDrtn,RV_OK,TK_NotStart,OCEC10961,Trench excavation for low voltage cable,2984,679,0,120,0,720,720,120,360,0,360,,,,2013-10-05 16:00,2013-10-21 16:00,,2013-06-30 07:00,2013-07-15 17:00,2013-06-30 07:00,2013-07-15 17:00,2013-06-30 07:00,2013-07-15 17:00,,2013-10-05 16:00,2013-10-21 16:00,,PT_Normal,,,,,x5hc/FJjZE2xIsyAukj05g,bC8dOpNvRWCFYC/7cvh+wg,,,N,0,0,,,2013-06-23 13:01,2013-06-23 13:01,admin,admin
950,86915,1346,11552,1473,1,0,N,N,N,CP_Phys,TT_Task,DT_FixedDrtn,RV_OK,TK_NotStart,OCEC10971,Bed preparation,2984,679,0,120,0,840,840,120,360,0,360,,,,2013-10-13 16:00,2013-10-29 16:00,,2013-07-08 07:00,2013-07-23 17:00,2013-07-08 07:00,2013-07-23 17:00,2013-07-08 07:00,2013-07-23 17:00,,2013-10-13 16:00,2013-10-29 16:00,,PT_Normal,,,,,y977PWWUIkmRQdTqs6KCQQ,36ZOXYmMSba/mrhCD20uDA,,,N,0,0,,,2013-06-23 13:01,2013-06-23 13:01,admin,admin
951,86916,1346,11552,1473,1,0,N,N,N,CP_Phys,TT_Task,DT_FixedDrtn,RV_OK,TK_NotStart,OCEC10981,Low Voltage Cable laying,2971,679,0,120,0,480,480,120,240,0,240,,,,2013-11-06 16:00,2013-11-26 16:00,,2013-08-03 07:00,2013-08-20 17:00,2013-08-03 07:00,2013-08-20 17:00,2013-08-03 07:00,2013-08-20 17:00,,2013-11-06 16:00,2013-11-26 16:00,,PT_Normal,,,,,zdaNCbm07ky8ztFs2odfWA,kCzzf5ZzRXm6DWRqcTi6yA,,,N,0,0,,,2013-06-23 13:01,2013-06-23 13:01,admin,admin
952,86917,1346,11552,1473,1,0,N,N,N,CP_Phys,TT_Task,DT_FixedDrtn,RV_OK,TK_NotStart,OCEC10991,Backfilling and compaction,3001,679,0,100,0,600,600,100,400,0,400,,,,2013-12-18 16:00,2014-01-01 16:00,,2013-09-14 07:00,2013-09-25 17:00,2013-09-14 07:00,2013-09-25 17:00,2013-09-14 07:00,2013-09-25 17:00,,2013-12-18 16:00,2014-01-01 16:00,,PT_Normal,,,,,kEbI1RkY/kmRR1CALetOkQ,0lu7k2kYR8GYwEA26wvB5g,,,N,0,0,,,2013-06-23 13:01,2013-06-23 13:01,admin,admin
953,86918,1346,11552,1473,1,0,N,N,N,CP_Phys,TT_Task,DT_FixedDrtn,RV_OK,TK_NotStart,OCEC11001,Marker post  and marker plates fixing,2971,679,0,100,0,300,300,100,0,0,0,,,,2014-01-01 16:00,2014-01-15 16:00,,2013-09-28 07:00,2013-10-09 17:00,2013-09-28 07:00,2013-10-09 17:00,2013-09-28 07:00,2013-10-09 17:00,,2014-01-01 16:00,2014-01-15 16:00,,PT_Normal,,,,,2nZ9OSTEjUWf7xLlpjy4yg,qDCjj5DaROyDvZxNXZPxaQ,,,N,0,0,,,2013-06-23 13:01,2013-06-23 13:01,admin,admin
954,86919,1346,11552,1473,1,0,N,N,N,CP_Phys,TT_Task,DT_FixedDrtn,RV_OK,TK_NotStart,OCEC11011,Install AC pipe ducts,2971,679,0,120,0,720,720,120,360,0,360,,,,2013-10-21 16:00,2013-11-06 16:00,,2013-07-16 07:00,2013-07-31 17:00,2013-07-16 07:00,2013-07-31 17:00,2013-07-16 07:00,2013-07-31 17:00,,2013-10-21 16:00,2013-11-06 16:00,,PT_Normal,,,,,Ydhgopb3CUezHmrfnlEtTA,pNSph9KhRFaKi9FBcTNesA,,,N,0,0,,,2013-06-23 13:01,2013-06-23 13:01,admin,admin
955,86920,1346,11552,1473,1,0,N,N,N,CP_Phys,TT_Task,DT_FixedDrtn,RV_OK,TK_NotStart,OCEC13061,Setting out and route survey,2983,679,0,40,0,80,80,40,40,0,40,,,,2013-09-29 16:00,2013-10-05 16:00,,2013-06-24 07:00,2013-06-29 17:00,2013-06-24 07:00,2013-06-29 17:00,2013-06-24 07:00,2013-06-29 17:00,,2013-09-29 16:00,2013-10-05 16:00,,PT_Normal,,,,,mfxIDMzarEWtteeeWA0pnQ,e+ePm4oxRW6RmMhwNqV4zQ,,,N,0,0,,,2013-06-23 13:01,2013-06-23 13:01,admin,admin
956,86921,1346,11552,1473,1,0,N,N,N,CP_Phys,TT_Task,DT_FixedDrtn,RV_OK,TK_NotStart,OCEC18231,Cable termination,2990,679,0,100,0,400,400,100,200,0,200,,,,2013-11-26 16:00,2013-12-10 16:00,,2013-08-21 07:00,2013-09-03 17:00,2013-08-21 07:00,2013-09-03 17:00,2013-08-21 07:00,2013-09-03 17:00,,2013-11-26 16:00,2013-12-10 16:00,,PT_Normal,,,,,XbNTghKWZUePT6HPxCxIkQ,vX2m6OfWQSW2HTb1hExTZg,,,N,0,0,,,2013-06-23 13:01,2013-06-23 13:01,admin,admin
957,86922,1346,11552,1473,1,0,N,N,N,CP_Phys,TT_Task,DT_FixedDrtn,RV_OK,TK_NotStart,OCEC18271,Inspection and Testing,2971,679,0,60,0,120,120,60,0,0,0,,,,2013-12-10 16:00,2013-12-18 16:00,,2013-09-04 07:00,2013-09-11 17:00,2013-09-04 07:00,2013-09-11 17:00,2013-09-04 07:00,2013-09-11 17:00,,2013-12-10 16:00,2013-12-18 16:00,,PT_Normal,,,,,B4j/Ajz5YU6s9R/tAK6mhw,+dt+dAwfTsK4oNUl5XnRfA,,,N,0,0,,,2013-06-23 13:01,2013-06-23 13:01,admin,admin
958,86923,1346,11552,1473,1,0,N,N,N,CP_Phys,TT_Task,DT_FixedDrtn,RV_OK,TK_NotStart,B2851,MIR for Duct Pipe,,1299,580,20,0,0,0,20,0,0,0,,,,2013-12-28 16:00,2013-12-30 16:00,,2013-06-24 07:00,2013-06-25 17:00,2013-06-24 07:00,2013-06-25 17:00,2013-06-24 07:00,2013-06-25 17:00,,2013-12-28 16:00,2013-12-30 16:00,,PT_Normal,,,,,izcvfmMLQEm3NS6pbi2vuQ,UsCRNg6vQlqboZ/QVMYBlQ,,,N,0,0,,,2013-06-23 13:01,2013-06-23 13:01,admin,admin
959,86924,1346,11552,1473,1,0,N,N,N,CP_Phys,TT_Task,DT_FixedDrtn,RV_OK,TK_NotStart,B2861,MAR for Duct Pipe,,1299,0,220,0,0,0,220,0,0,0,,,,2013-11-04 16:00,2013-12-08 16:00,,2013-05-05 07:00,2013-06-03 17:00,2013-05-05 07:00,2013-06-03 17:00,2013-05-05 07:00,2013-06-03 17:00,,2013-11-04 16:00,2013-12-08 16:00,,PT_Normal,,,,,5qopEBm9wUqNc5PNRvkM9g,HefIik8YQqmokj7o4cRN+g,,,N,0,0,,,2013-06-23 13:01,2013-06-23 13:01,admin,admin
960,86925,1346,11552,1474,1,0,N,N,N,CP_Phys,TT_Task,DT_FixedDrtn,RV_OK,TK_NotStart,B2871,Procurment  for Duct Pipe,,1879,0,200,0,0,0,200,0,0,0,,,,2013-12-08 16:00,2013-12-28 16:00,,2013-06-04 07:00,2013-06-23 17:00,2013-06-04 07:00,2013-06-23 17:00,2013-06-04 07:00,2013-06-23 17:00,,2013-12-08 16:00,2013-12-28 16:00,,PT_Normal,,,,,7g5ndrOzK0mDE06DzoH39w,ckB3GZcNQpaILHLLLCf1Xg,,,N,0,0,,,2013-06-23 13:01,2013-06-23 13:01,admin,admin
961,86926,1346,11552,1473,1,0,N,N,N,CP_Phys,TT_Task,DT_FixedDrtn,RV_OK,TK_NotStart,A15069,"Prepare and Submit Method Statment for Excavation, Bedding, Cable Laying and Backfilling",,789,0,140,0,0,0,140,0,0,0,,,,2013-08-26 16:00,2013-09-15 16:00,,2013-05-06 07:00,2013-05-25 17:00,2013-05-06 07:00,2013-05-25 17:00,2013-05-06 07:00,2013-05-25 17:00,,2013-08-26 16:00,2013-09-15 16:00,,PT_Normal,,,,,/Q7Fp/fwnE6dcPXyIKIYSg,fIYI+pVgSfGnPhr9dWgZhQ,,,N,0,0,,,2013-06-23 13:01,2013-06-23 13:01,admin,admin
962,86927,1346,11552,1473,1,0,N,N,N,CP_Phys,TT_Task,DT_FixedDrtn,RV_OK,TK_NotStart,A15070,"Review and approval for Method Statment for Excavation, Bedding, Cable Laying and Backfilling",,789,110,140,0,0,0,140,0,0,0,,,,2013-09-15 16:00,2013-10-05 16:00,,2013-05-26 07:00,2013-06-12 17:00,2013-05-26 07:00,2013-06-12 17:00,2013-05-26 07:00,2013-06-12 17:00,,2013-09-15 16:00,2013-10-05 16:00,,PT_Normal,,,,,yQOmxi2ERUe7CQYlxPJ1ug,T7HJuQZWRN2A55Ha/FDAjw,,,N,0,0,,,2013-06-23 13:01,2013-06-23 13:01,admin,admin
963,86928,1346,11552,1473,1,0,N,N,N,CP_Phys,TT_Task,DT_FixedDrtn,RV_OK,TK_NotStart,B2862,Prepartion & Submission for Duct Pipe,,1299,0,80,0,0,0,80,0,0,0,,,,2013-10-23 16:00,2013-11-04 16:00,,2013-04-23 07:00,2013-05-04 17:00,2013-04-23 07:00,2013-05-04 17:00,2013-04-23 07:00,2013-05-04 17:00,,2013-10-23 16:00,2013-11-04 16:00,,PT_Normal,,,,,uVwFjNwbzU+niNdmjahGOw,lNSxNih8g0qrRuFgDlPvag,,,N,0,0,,,2013-06-23 13:01,2013-06-23 13:01,admin,admin
964,86929,1346,11568,1473,1,0,N,N,N,CP_Phys,TT_Task,DT_FixedDrtn,RV_OK,TK_NotStart,OCEC11021,Concrete base for Feeder Pillar and High mast,2971,759,0,120,0,2280,2280,120,0,0,0,,,,2013-10-29 16:00,2013-11-16 16:00,,2013-07-14 07:00,2013-07-29 17:00,2013-07-14 07:00,2013-07-29 17:00,2013-07-14 07:00,2013-07-29 17:00,,2013-10-29 16:00,2013-11-16 16:00,,PT_Normal,,,,,tTRFCuuBh0+MRlSvkM7p0g,hLnT1fNQTdi/QyK8GJH14w,,,N,0,0,,,2013-06-23 13:01,2013-06-23 13:01,admin,admin
965,86930,1346,11568,1473,1,0,N,N,N,CP_Phys,TT_Task,DT_FixedDrtn,RV_OK,TK_NotStart,OCEC11031,Installation of Feed Pillar,2971,769,0,80,0,320,320,80,160,0,160,,,,2013-11-05 16:00,2013-11-17 16:00,,2013-07-20 07:00,2013-07-29 17:00,2013-07-20 07:00,2013-07-29 17:00,2013-07-20 07:00,2013-07-29 17:00,,2013-11-05 16:00,2013-11-17 16:00,,PT_Normal,,,,,tYspO2x/j0aihvEihktrQQ,h2W1pocYTMqH/yM+Wb15fw,,,N,0,0,,,2013-06-23 13:01,2013-06-23 13:01,admin,admin
966,86931,1346,11568,1473,1,0,N,N,N,CP_Phys,TT_Task,DT_FixedDrtn,RV_OK,TK_NotStart,OCEC11041,Installation of Ornamental Lighting Columns,2971,769,10,70,0,840,840,70,140,0,140,,,,2013-11-10 16:00,2013-11-23 16:00,,2013-07-23 07:00,2013-07-31 17:00,2013-07-23 07:00,2013-07-31 17:00,2013-07-23 07:00,2013-07-31 17:00,,2013-11-10 16:00,2013-11-23 16:00,,PT_Normal,,,,,T9RZzWx0LEe8cTKnjwq9cw,A46c8lj8QVihQIGxZugKlg,,,N,0,0,,,2013-06-23 13:01,2013-06-23 13:01,admin,admin
967,86932,1346,11568,1473,1,0,N,N,N,CP_Phys,TT_Task,DT_FixedDrtn,RV_OK,TK_NotStart,OCEC11051,Installation of High mast assembly,2971,759,0,100,0,500,500,100,200,0,200,,,,2013-11-05 16:00,2013-11-23 16:00,,2013-07-21 07:00,2013-08-03 17:00,2013-07-21 07:00,2013-08-03 17:00,2013-07-21 07:00,2013-08-03 17:00,,2013-11-05 16:00,2013-11-23 16:00,,PT_Normal,,,,,HzySUtZ2JUmI7YXexfTk4w,O9Vj/m+/Sie6M49OVGEwcw,,,N,0,0,,,2013-06-23 13:01,2013-06-23 13:01,admin,admin
968,86933,1346,11568,1473,1,0,N,N,N,CP_Phys,TT_Task,DT_FixedDrtn,RV_OK,TK_NotStart,OCEC11061,Earthing for Feeder Pillar and the end of Street lighting circuit,2969,759,0,100,0,300,300,100,0,0,0,,,,2013-11-23 16:00,2013-12-07 16:00,,2013-08-04 07:00,2013-08-19 17:00,2013-08-04 07:00,2013-08-19 17:00,2013-08-04 07:00,2013-08-19 17:00,,2013-11-23 16:00,2013-12-07 16:00,,PT_Normal,,,,,tBrw/uwbrEG4DM8Wl4GlAw,MhjzUS/fTiCIFR6dQTvldQ,,,N,0,0,,,2013-06-23 13:01,2013-06-23 13:01,admin,admin
969,86934,1346,11568,1473,1,0,N,N,N,CP_Phys,TT_Task,DT_FixedDrtn,RV_OK,TK_NotStart,OCEC11071,Power supply connections and Tests,2969,759,80,250,0,2750,2750,250,0,0,0,,,,2013-12-11 16:00,2014-01-15 16:00,,2013-08-26 07:00,2013-09-29 17:00,2013-08-26 07:00,2013-09-29 17:00,2013-08-26 07:00,2013-09-29 17:00,,2013-12-11 16:00,2014-01-15 16:00,,PT_Normal,,,,,VBi+ROhpQEmrAUlGYjFXIg,WZhk/PzXTxSZz53ovdOOiw,,,N,0,0,,,2013-06-23 13:01,2013-06-23 13:01,admin,admin
970,86935,1346,11568,1473,1,0,N,N,N,CP_Phys,TT_Task,DT_FixedDrtn,RV_OK,TK_NotStart,OCEC18331,Setting out and route survey,2983,819,0,40,0,80,80,40,40,0,40,,,,2013-10-19 16:00,2013-10-23 16:00,,2013-06-24 07:00,2013-06-29 17:00,2013-06-24 07:00,2013-06-29 17:00,2013-06-24 07:00,2013-06-29 17:00,,2013-10-19 16:00,2013-10-23 16:00,,PT_Normal,,,,,tPY8yfuKzkSZR+G/NZ3mLg,0hVx0HhpQG+kzO9uftX9Cw,,,N,0,0,,,2013-06-23 13:01,2013-06-23 13:01,admin,admin
971,86936,1346,11568,1473,1,0,N,N,N,CP_Phys,TT_Task,DT_FixedDrtn,RV_OK,TK_NotStart,OCEC18341,Excavation Works,2984,759,0,40,0,280,280,40,120,0,120,,,,2013-10-23 16:00,2013-10-29 16:00,,2013-07-08 07:00,2013-07-13 17:00,2013-07-08 07:00,2013-07-13 17:00,2013-07-08 07:00,2013-07-13 17:00,,2013-10-23 16:00,2013-10-29 16:00,,PT_Normal,,,,,Kz+pN8fQn0+eqHGQG8E3VQ,zBtGktQLR/uG2XCmVaPDLA,,,N,0,0,,,2013-06-23 13:01,2013-06-23 13:01,admin,admin
972,86937,1346,11568,1473,1,0,N,N,N,CP_Phys,TT_Task,DT_FixedDrtn,RV_OK,TK_NotStart,OCEC18351,Inspection and Testing,2969,759,0,40,0,120,120,40,0,0,0,,,,2013-12-07 16:00,2013-12-11 16:00,,2013-08-20 07:00,2013-08-25 17:00,2013-08-20 07:00,2013-08-25 17:00,2013-08-20 07:00,2013-08-25 17:00,,2013-12-07 16:00,2013-12-11 16:00,,PT_Normal,,,,,C69gvw1iq0qHeh7WAx2g3g,ZIx9OgYRQ4KZDq5Goi5MEA,,,N,0,0,,,2013-06-23 13:01,2013-06-23 13:01,admin,admin
973,86938,1346,11568,1473,1,0,N,N,N,CP_Phys,TT_Task,DT_FixedDrtn,RV_OK,TK_NotStart,A15071,Prepare and Submit Method Statment for Road Lighting Works,,859,0,120,0,0,0,120,0,0,0,,,,2013-09-17 16:00,2013-10-05 16:00,,2013-05-19 07:00,2013-06-03 17:00,2013-05-19 07:00,2013-06-03 17:00,2013-05-19 07:00,2013-06-03 17:00,,2013-09-17 16:00,2013-10-05 16:00,,PT_Normal,,,,,UjKd6LhGX0qpYmyVD7Sfqg,c4VlhG/XT4CQDb4ZAxXutQ,,,N,0,0,,,2013-06-23 13:01,2013-06-23 13:01,admin,admin
974,86939,1346,11568,1473,1,0,N,N,N,CP_Phys,TT_Task,DT_FixedDrtn,RV_OK,TK_NotStart,A15072,Review and approval for Method Statment for Road Lighting Works,,859,100,140,0,0,0,140,0,0,0,,,,2013-10-05 16:00,2013-10-23 16:00,,2013-06-04 07:00,2013-06-23 17:00,2013-06-04 07:00,2013-06-23 17:00,2013-06-04 07:00,2013-06-23 17:00,,2013-10-05 16:00,2013-10-23 16:00,,PT_Normal,,,,,IjgIUYPlf0Gt09+wvGNQhA,ubnhX6mOQaaXn6sR5xtlqA,,,N,0,0,,,2013-06-23 13:01,2013-06-23 13:01,admin,admin
975,86940,1346,11555,1473,1,0,N,N,N,CP_Phys,TT_Task,DT_FixedDrtn,RV_OK,TK_NotStart,OCEC10451,Completion of Works in Road no. 3,,679,670,8,0,7680,7680,8,0,0,0,,,,2014-01-15 08:00,2014-01-15 16:00,,2013-10-09 09:00,2013-10-09 17:00,2013-10-09 09:00,2013-10-09 17:00,2013-10-09 09:00,2013-10-09 17:00,,2014-01-15 08:00,2014-01-15 16:00,,PT_Normal,,,,,ffGL0w7/qUeX+tHwSgtMdw,XWIf5MX5QSOzG7NnNQwOlA,,,N,0,0,,,2013-06-23 13:01,2013-06-23 13:01,admin,admin
976,86941,1346,11621,1473,1,0,N,N,N,CP_Phys,TT_Task,DT_FixedDrtn,RV_OK,TK_NotStart,OCEC10411,Trench excavation,2984,1499,0,60,0,420,420,60,120,0,120,,,,2013-12-14 16:00,2013-12-22 16:00,,2013-05-13 07:00,2013-05-20 17:00,2013-05-13 07:00,2013-05-20 17:00,2013-05-13 07:00,2013-05-20 17:00,,2013-12-14 16:00,2013-12-22 16:00,,PT_Normal,,,,,6QNIG2saf06fxpXFJnyfgw,+pVG/Sl5S7KAMWhXFLTY3w,,,N,0,0,,,2013-06-23 13:01,2013-06-23 13:01,admin,admin
977,86942,1346,11621,1473,1,0,N,N,N,CP_Phys,TT_Task,DT_FixedDrtn,RV_OK,TK_NotStart,OCEC10421,Preparation of bed,2971,1499,0,40,0,280,280,40,40,0,40,,,,2013-12-22 16:00,2013-12-28 16:00,,2013-05-21 07:00,2013-05-26 17:00,2013-05-21 07:00,2013-05-26 17:00,2013-05-21 07:00,2013-05-26 17:00,,2013-12-22 16:00,2013-12-28 16:00,,PT_Normal,,,,,lBPxtAvDB0uvIAvO2FJ5wQ,l7IloE0+SfCGf0On3pCCdw,,,N,0,0,,,2013-06-23 13:01,2013-06-23 13:01,admin,admin
978,86943,1346,11621,1473,1,0,N,N,N,CP_Phys,TT_Task,DT_FixedDrtn,RV_OK,TK_NotStart,OCEC10432,Construction of utilites crossing (Duct),2971,1499,0,60,0,780,780,60,120,0,120,,,,2013-12-28 16:00,2014-01-05 16:00,,2013-05-27 07:00,2013-06-03 17:00,2013-05-27 07:00,2013-06-03 17:00,2013-05-27 07:00,2013-06-03 17:00,,2013-12-28 16:00,2014-01-05 16:00,,PT_Normal,,,,,1iv6k/IgEEK18gcZ6qbmqw,IkmojhcWTpa97uH8j8hoyw,,,N,0,0,,,2013-06-23 13:01,2013-06-23 13:01,admin,admin
979,86944,1346,11621,1473,1,0,N,N,N,CP_Phys,TT_Task,DT_FixedDrtn,RV_OK,TK_NotStart,OCEC10441,Backfilling and compaction,3001,1499,0,40,0,360,360,40,120,0,120,,,,2014-01-05 16:00,2014-01-11 16:00,,2013-06-04 07:00,2013-06-09 17:00,2013-06-04 07:00,2013-06-09 17:00,2013-06-04 07:00,2013-06-09 17:00,,2014-01-05 16:00,2014-01-11 16:00,,PT_Normal,,,,,7nTwk06K2kOR6EkT+ZG7Ww,QZtb3l+6T/q2p24dA2mc3Q,,,N,0,0,,,2013-06-23 13:01,2013-06-23 13:01,admin,admin
980,86945,1346,11621,1473,1,0,N,N,N,CP_Phys,TT_Task,DT_FixedDrtn,RV_OK,TK_NotStart,OCEC10851,Setting out and route survey,2983,1119,100,40,0,80,80,40,40,0,40,,,,2013-09-29 16:00,2013-10-05 16:00,,2013-04-23 07:00,2013-04-28 17:00,2013-04-23 07:00,2013-04-28 17:00,2013-04-23 07:00,2013-04-28 17:00,,2013-09-29 16:00,2013-10-05 16:00,,PT_Normal,,,,,C4hs33qOR06CyiDHu4rK5A,P2unYBzFRpSDWYuyIYGIOA,,,N,0,0,,,2013-06-23 13:01,2013-06-23 13:01,admin,admin
981,86946,1346,11621,1473,1,100,N,N,N,CP_Phys,TT_Task,DT_FixedDrtn,RV_OK,TK_Complete,A15079,"Prepare and Submit Method Statment for Excavation, Bedding, Pipe Laying and Backfilling",,,,0,0,0,0,140,0,0,0,,2013-01-16 16:00,2013-02-05 16:00,2013-08-13 16:00,2013-08-13 16:00,,2013-04-23 00:00,2013-04-23 00:00,,,2013-01-16 16:00,2013-02-05 16:00,,,,,PT_Normal,,,,,F8F90sspPESFYXi4Fwge8Q,sAAqw3nPQbm4x8F/0S7JVw,,,N,0,0,,,2013-06-23 13:01,2013-06-23 13:01,admin,admin
982,86947,1346,11621,1473,1,80,N,N,N,CP_Phys,TT_Task,DT_FixedDrtn,RV_OK,TK_Active,A15080,"Review and approval for Method Statment for Excavation, Bedding, Pipe Laying and Backfilling",,1499,0,140,0,0,0,140,0,0,0,,2013-02-05 16:00,,2013-11-24 16:00,2013-12-14 16:00,,2013-04-23 07:00,2013-05-12 17:00,2013-04-23 07:00,2013-05-12 17:00,2013-02-05 16:00,2013-02-25 16:00,,2013-11-24 16:00,2013-12-14 16:00,,PT_Normal,,,,,eiESLlx0LkG0y29tkUFjKw,Fm3d5CPVRM2z7rnPUjHZxw,,,N,0,0,,,2013-06-23 13:01,2013-06-23 13:01,admin,admin
983,86948,1346,11621,1473,1,0,N,N,N,CP_Phys,TT_Task,DT_FixedDrtn,RV_OK,TK_NotStart,OCEC10433,Inspection and Testing,2969,1499,820,40,0,80,80,40,0,0,0,,,,2014-01-11 16:00,2014-01-15 16:00,,2013-06-10 07:00,2013-06-15 17:00,2013-06-10 07:00,2013-06-15 17:00,2013-06-10 07:00,2013-06-15 17:00,,2014-01-11 16:00,2014-01-15 16:00,,PT_Normal,,,,,4MWeFIvwDkuEUyJU0CzyKQ,nNN3jZ68SqqFOEZGRGaxMg,,,N,0,0,,,2013-06-23 13:01,2013-06-23 13:01,admin,admin
984,86949,1346,11546,1473,1,100,N,N,N,CP_Phys,TT_Task,DT_FixedDrtn,RV_OK,TK_Complete,OCEC10471,Survey works and setting out,,,,0,0,0,0,40,0,0,0,,2013-01-16 16:00,2013-01-22 16:00,2013-08-14 16:00,2013-08-14 16:00,,2013-04-23 00:00,2013-04-23 00:00,,,2013-01-16 16:00,2013-01-22 16:00,,,,,PT_Normal,,,,,gO5qQc/kcUayOuxOMphKJg,RgqMZZQET5OdB6ePeQ1Mug,,,N,0,0,,,2013-06-23 13:01,2013-06-23 13:01,admin,admin
985,86950,1346,11554,1473,1,0,N,N,N,CP_Phys,TT_Task,DT_FixedDrtn,RV_OK,TK_NotStart,OCEC11631,Precast Concrete tile Paving 60 mm thick,2969,1099,0,60,0,1920,1920,60,60,0,60,,,,2013-12-03 16:00,2013-12-11 16:00,,2013-06-29 07:00,2013-07-06 17:00,2013-06-29 07:00,2013-07-06 17:00,2013-06-29 07:00,2013-07-06 17:00,,2013-12-03 16:00,2013-12-11 16:00,,PT_Normal,,,,,rpMdqXeZeUCGrRKbHqQaJg,2Jlo7Wa8SqOVsvwf3wbpBQ,,,N,0,0,,,2013-06-23 13:01,2013-06-23 13:01,admin,admin
986,86951,1346,11554,1473,1,0,N,N,N,CP_Phys,TT_Task,DT_FixedDrtn,RV_OK,TK_NotStart,OCEC11651,Traffic Signs,2969,1169,0,100,0,1300,1300,100,200,0,200,,,,2013-12-28 16:00,2014-01-11 16:00,,2013-07-13 07:00,2013-07-24 17:00,2013-07-13 07:00,2013-07-24 17:00,2013-07-13 07:00,2013-07-24 17:00,,2013-12-28 16:00,2014-01-11 16:00,,PT_Normal,,,,,y1KzE03kL0qLwPYDJ9DYuw,iPIUZrTnQO2iXnPyfbVZng,,,N,0,0,,,2013-06-23 13:01,2013-06-23 13:01,admin,admin
987,86952,1346,11554,1473,1,0,N,N,N,CP_Phys,TT_Task,DT_FixedDrtn,RV_OK,TK_NotStart,OCEC11671,Riprap Works,2969,1099,0,60,0,1200,1200,60,240,0,240,,,,2013-12-03 16:00,2013-12-11 16:00,,2013-06-29 07:00,2013-07-06 17:00,2013-06-29 07:00,2013-07-06 17:00,2013-06-29 07:00,2013-07-06 17:00,,2013-12-03 16:00,2013-12-11 16:00,,PT_Normal,,,,,M7RdRlF9o0CPW4mpXIAmjA,PASjlff5TD2rJFHq3Z4lfw,,,N,0,0,,,2013-06-23 13:01,2013-06-23 13:01,admin,admin
988,86953,1346,11554,1473,1,0,N,N,N,CP_Phys,TT_Task,DT_FixedDrtn,RV_OK,TK_NotStart,OCEC18581,Gabions Works,2969,1099,0,60,0,1200,1200,60,240,0,240,,,,2013-12-03 16:00,2013-12-11 16:00,,2013-06-29 07:00,2013-07-06 17:00,2013-06-29 07:00,2013-07-06 17:00,2013-06-29 07:00,2013-07-06 17:00,,2013-12-03 16:00,2013-12-11 16:00,,PT_Normal,,,,,YbGN+j/Jx0+huDaPkf1Udg,ujcuPlGDRHyzE6gDRyujrQ,,,N,0,0,,,2013-06-23 13:01,2013-06-23 13:01,admin,admin
989,86954,1346,11554,1473,1,0,N,N,N,CP_Phys,TT_Task,DT_FixedDrtn,RV_OK,TK_NotStart,OCEC18591,Ditch Lining Works,2969,1099,0,60,0,960,960,60,0,0,0,,,,2013-12-03 16:00,2013-12-11 16:00,,2013-06-29 07:00,2013-07-06 17:00,2013-06-29 07:00,2013-07-06 17:00,2013-06-29 07:00,2013-07-06 17:00,,2013-12-03 16:00,2013-12-11 16:00,,PT_Normal,,,,,vA03v0aJl0mmGXp182teyg,fGBo1tShRoK4zOVXgGOX6A,,,N,0,0,,,2013-06-23 13:01,2013-06-23 13:01,admin,admin
990,86955,1346,11554,1473,1,0,N,N,N,CP_Phys,TT_Task,DT_FixedDrtn,RV_OK,TK_NotStart,OCEC18601,Coastal Protection Works,2969,1099,410,250,0,5000,5000,250,1000,0,1000,,,,2013-12-11 16:00,2014-01-15 16:00,,2013-07-07 07:00,2013-08-12 17:00,2013-07-07 07:00,2013-08-12 17:00,2013-07-07 07:00,2013-08-12 17:00,,2013-12-11 16:00,2014-01-15 16:00,,PT_Normal,,,,,5h1IOuGjmE+IPqe/bTQNIQ,oSNUFazkT1aJT4kK2/yjsg,,,N,0,0,,,2013-06-23 13:01,2013-06-23 13:01,admin,admin
991,86956,1346,11554,1473,1,0,N,N,N,CP_Phys,TT_Task,DT_FixedDrtn,RV_OK,TK_NotStart,OCEC18611,Interlok Tiles,2969,1269,580,140,0,2240,2240,140,0,0,0,,,,2013-12-28 16:00,2014-01-15 16:00,,2013-06-29 07:00,2013-07-16 17:00,2013-06-29 07:00,2013-07-16 17:00,2013-06-29 07:00,2013-07-16 17:00,,2013-12-28 16:00,2014-01-15 16:00,,PT_Normal,,,,,zGuHaXqPIkqRCuJoCeJNjA,IG2z6lolT8yDmEWdDttgew,,,N,0,0,,,2013-06-23 13:01,2013-06-23 13:01,admin,admin
992,86957,1346,11554,1473,1,0,N,N,N,CP_Phys,TT_Task,DT_FixedDrtn,RV_OK,TK_NotStart,OCEC18621,Road Marking and Studs,2969,1169,480,140,0,2240,2240,140,0,0,0,,,,2013-12-28 16:00,2014-01-15 16:00,,2013-07-13 07:00,2013-07-30 17:00,2013-07-13 07:00,2013-07-30 17:00,2013-07-13 07:00,2013-07-30 17:00,,2013-12-28 16:00,2014-01-15 16:00,,PT_Normal,,,,,25WNKpzIkkm/UxWTXB48jQ,cToybgVFTx+zk+e5ICrPtg,,,N,0,0,,,2013-06-23 13:01,2013-06-23 13:01,admin,admin
993,86958,1346,11573,1473,1,0,N,N,N,CP_Phys,TT_Task,DT_FixedDrtn,RV_OK,TK_NotStart,OCEC10781,Trench excavation,2984,1489,0,60,0,360,360,60,120,0,120,,,,2013-12-14 16:00,2013-12-22 16:00,,2013-05-14 07:00,2013-05-21 17:00,2013-05-14 07:00,2013-05-21 17:00,2013-05-14 07:00,2013-05-21 17:00,,2013-12-14 16:00,2013-12-22 16:00,,PT_Normal,,,,,Gj6VdedOfki7+54Rr/F9NQ,QzpA+96sTh6io4exM6OA+A,,,N,0,0,,,2013-06-23 13:01,2013-06-23 13:01,admin,admin
994,86959,1346,11573,1473,1,0,N,N,N,CP_Phys,TT_Task,DT_FixedDrtn,RV_OK,TK_NotStart,OCEC11331,Preparation of bed,2971,1489,0,40,0,240,240,40,40,0,40,,,,2013-12-22 16:00,2013-12-28 16:00,,2013-05-22 07:00,2013-05-27 17:00,2013-05-22 07:00,2013-05-27 17:00,2013-05-22 07:00,2013-05-27 17:00,,2013-12-22 16:00,2013-12-28 16:00,,PT_Normal,,,,,Zj1DW71BSEuzB+TXCTxNSw,aO33Ynm+S2WUCK7zFLrhMw,,,N,0,0,,,2013-06-23 13:01,2013-06-23 13:01,admin,admin
995,86960,1346,11573,1473,1,0,N,N,N,CP_Phys,TT_Task,DT_FixedDrtn,RV_OK,TK_NotStart,OCEC11342,Construction of utilites crossing (Duct),2971,1489,0,60,0,780,780,60,120,0,120,,,,2013-12-28 16:00,2014-01-05 16:00,,2013-05-28 07:00,2013-06-04 17:00,2013-05-28 07:00,2013-06-04 17:00,2013-05-28 07:00,2013-06-04 17:00,,2013-12-28 16:00,2014-01-05 16:00,,PT_Normal,,,,,HvYxdg+GJkGHq64PZmGcbg,6ds8+4SyTvSGU2bEza8/pw,,,N,0,0,,,2013-06-23 13:01,2013-06-23 13:01,admin,admin
996,86961,1346,11573,1473,1,0,N,N,N,CP_Phys,TT_Task,DT_FixedDrtn,RV_OK,TK_NotStart,OCEC11351,Backfilling and compaction,2984,1489,0,40,0,360,360,40,120,0,120,,,,2014-01-05 16:00,2014-01-11 16:00,,2013-06-05 07:00,2013-06-10 17:00,2013-06-05 07:00,2013-06-10 17:00,2013-06-05 07:00,2013-06-10 17:00,,2014-01-05 16:00,2014-01-11 16:00,,PT_Normal,,,,,9AzdkvFISUu3/RnTYih1/A,COahjBksRSGen0W8XXHPsw,,,N,0,0,,,2013-06-23 13:01,2013-06-23 13:01,admin,admin
997,86962,1346,11573,1473,1,0,N,N,N,CP_Phys,TT_Task,DT_FixedDrtn,RV_OK,TK_NotStart,OCEC11701,Setting out and route survey,2983,989,110,40,0,80,80,40,40,0,40,,,,2013-09-10 16:00,2013-09-16 16:00,,2013-04-23 07:00,2013-04-28 17:00,2013-04-23 07:00,2013-04-28 17:00,2013-04-23 07:00,2013-04-28 17:00,,2013-09-10 16:00,2013-09-16 16:00,,PT_Normal,,,,,K/oVP0rS50iD7wGo4vtZDw,GKbAkWnYS+adLDc/gq+Amg,,,N,0,0,,,2013-06-23 13:01,2013-06-23 13:01,admin,admin
998,86963,1346,11573,1473,1,0,N,N,N,CP_Phys,TT_Task,DT_FixedDrtn,RV_OK,TK_NotStart,OCEC11343,Inspection and Testing,2971,1489,800,40,0,80,80,40,0,0,0,,,,2014-01-11 16:00,2014-01-15 16:00,,2013-06-11 07:00,2013-06-16 17:00,2013-06-11 07:00,2013-06-16 17:00,2013-06-11 07:00,2013-06-16 17:00,,2014-01-11 16:00,2014-01-15 16:00,,PT_Normal,,,,,QpP6p+TEo06DalCiMokp6g,rkJURWigSyqknx5HeH82hg,,,N,0,0,,,2013-06-23 13:01,2013-06-23 13:01,admin,admin
999,86964,1346,11593,1473,1,0,N,N,N,CP_Phys,TT_Task,DT_FixedDrtn,RV_OK,TK_NotStart,OCEC11681,Completion of Works in Road no. 5,,689,680,8,0,7680,7680,8,0,0,0,,,,2014-01-15 08:00,2014-01-15 16:00,,2013-10-08 09:00,2013-10-08 17:00,2013-10-08 09:00,2013-10-08 17:00,2013-10-08 09:00,2013-10-08 17:00,,2014-01-15 08:00,2014-01-15 16:00,,PT_Normal,,,,,xBZjWT8WTUuFWGBr2jp1Iw,B1D2wdj1SwGj11wDhez41w,,,N,0,0,,,2013-06-23 13:01,2013-06-23 13:01,admin,admin
1000,86965,1346,11556,1473,1,100,N,N,N,CP_Phys,TT_Task,DT_FixedDrtn,RV_OK,TK_Complete,OCEC11361,Setting out and route survey,2983,,,0,80,0,80,40,40,40,0,,2013-02-17 00:00,2013-02-23 00:00,2013-09-10 16:00,2013-09-10 16:00,,2013-06-23 17:00,2013-06-23 17:00,,,2013-05-26 16:00,2013-06-01 16:00,,,,,PT_Normal,,,,,Qq8cGW1QSE+eZSxKkgsdoQ,I9UUFYmcQcOzO7qVBQCCgg,,,N,80,40,,,2013-06-23 13:01,2013-06-23 13:01,admin,admin
1001,86966,1346,11556,1473,1,40,N,N,N,CP_Phys,TT_Task,DT_FixedDrtn,RV_OK,TK_Active,OCEC11371,Trench excavation,2971,579,0,120,0,360,360,120,120,0,120,,2013-02-23 00:00,,2013-09-15 16:00,2013-10-01 16:00,,2013-06-24 07:00,2013-07-09 17:00,2013-06-24 07:00,2013-07-09 17:00,2013-06-01 16:00,2013-06-17 16:00,,2013-09-15 16:00,2013-10-01 16:00,,PT_Normal,,,,,gkGChrVCb0KMGJicYhSBiQ,Ipa5Bm9DSESS8EJ2cmMf6A,,,N,0,0,,,2013-06-23 13:01,2013-06-23 13:01,admin,admin
1002,86967,1346,11556,1473,1,0,N,N,N,CP_Phys,TT_Task,DT_FixedDrtn,RV_OK,TK_NotStart,OCEC11381,"Bedding, Compaction and Levelling",2984,789,0,60,0,300,300,60,60,0,60,,,,2013-10-14 16:00,2013-10-22 16:00,,2013-06-24 07:00,2013-07-01 17:00,2013-06-24 07:00,2013-07-01 17:00,2013-06-24 07:00,2013-07-01 17:00,,2013-10-14 16:00,2013-10-22 16:00,,PT_Normal,,,,,iRXYp933Zk+Hreo3DAZGpg,uj/sIZfqQuGf+FobmxDC7w,,,N,0,0,,,2013-06-23 13:01,2013-06-23 13:01,admin,admin
1003,86968,1346,11556,1473,1,0,N,N,N,CP_Phys,TT_Task,DT_FixedDrtn,RV_OK,TK_NotStart,OCEC11391,Pipe lowering,2971,789,0,80,0,720,720,80,160,0,160,,,,2013-12-14 16:00,2013-12-24 16:00,,2013-08-24 07:00,2013-09-02 17:00,2013-08-24 07:00,2013-09-02 17:00,2013-08-24 07:00,2013-09-02 17:00,,2013-12-14 16:00,2013-12-24 16:00,,PT_Normal,,,,,sjN6IlkYhUuN4nfowt5zNQ,+xpnH/79SnSGR9SfOTkCWQ,,,N,0,0,,,2013-06-23 13:01,2013-06-23 13:01,admin,admin
1004,86969,1346,11556,1473,1,0,N,N,N,CP_Phys,TT_Task,DT_FixedDrtn,RV_OK,TK_NotStart,OCEC11401,Pipe joining,2971,789,0,80,0,480,480,80,80,0,80,,,,2013-12-18 16:00,2013-12-30 16:00,,2013-08-28 07:00,2013-09-08 17:00,2013-08-28 07:00,2013-09-08 17:00,2013-08-28 07:00,2013-09-08 17:00,,2013-12-18 16:00,2013-12-30 16:00,,PT_Normal,,,,,BN+Syd78n0GJQCtJtp/yBA,3SyjGiijR2Km5PAu6+5TrQ,,,N,0,0,,,2013-06-23 13:01,2013-06-23 13:01,admin,admin
1005,86970,1346,11556,1473,1,0,N,N,N,CP_Phys,TT_Task,DT_FixedDrtn,RV_OK,TK_NotStart,OCEC11411,Backfilling and Compaction,2984,789,0,80,0,560,560,80,240,0,240,,,,2013-12-30 16:00,2014-01-11 16:00,,2013-09-09 07:00,2013-09-18 17:00,2013-09-09 07:00,2013-09-18 17:00,2013-09-09 07:00,2013-09-18 17:00,,2013-12-30 16:00,2014-01-11 16:00,,PT_Normal,,,,,7UQ+1R2oUU2Pv/4UvprvvQ,qITi8aesS1u1XWF9/PSdRw,,,N,0,0,,,2013-06-23 13:01,2013-06-23 13:01,admin,admin
1006,86971,1346,11556,1473,1,0,N,N,N,CP_Phys,TT_Task,DT_FixedDrtn,RV_OK,TK_NotStart,OCEC11421,Construction of Catch Pits and hook up,2981,789,0,250,0,1750,1750,250,0,0,0,,,,2013-11-02 16:00,2013-12-09 16:00,,2013-07-13 07:00,2013-08-18 17:00,2013-07-13 07:00,2013-08-18 17:00,2013-07-13 07:00,2013-08-18 17:00,,2013-11-02 16:00,2013-12-09 16:00,,PT_Normal,,,,,yrHMNLstgkSPcp32XXZabQ,DQSyFkLjQ/CWtvSO1n+YAw,,,N,0,0,,,2013-06-23 13:01,2013-06-23 13:01,admin,admin
1007,86972,1346,11556,1473,1,0,N,N,N,CP_Phys,TT_Task,DT_FixedDrtn,RV_OK,TK_NotStart,OCEC11431,Inspection and Testing,2969,789,100,40,0,80,80,40,0,0,0,,,,2014-01-11 16:00,2014-01-15 16:00,,2013-09-21 07:00,2013-09-24 17:00,2013-09-21 07:00,2013-09-24 17:00,2013-09-21 07:00,2013-09-24 17:00,,2014-01-11 16:00,2014-01-15 16:00,,PT_Normal,,,,,5uydSLr/y0u4NkmP/uW80A,zigZqY9VRj6DNDPTWvAtcg,,,N,0,0,,,2013-06-23 13:01,2013-06-23 13:01,admin,admin
1008,86973,1346,11556,1473,1,0,N,N,N,CP_Phys,TT_Task,DT_FixedDrtn,RV_OK,TK_NotStart,OCEC18531,Construction of Grate Opennings,2969,789,0,60,0,420,420,60,0,0,0,,,,2013-12-09 16:00,2013-12-17 16:00,,2013-08-19 07:00,2013-08-26 17:00,2013-08-19 07:00,2013-08-26 17:00,2013-08-19 07:00,2013-08-26 17:00,,2013-12-09 16:00,2013-12-17 16:00,,PT_Normal,,,,,Ra4cBTUJXk2UFwZHv9zk+Q,mcUpOZDaSjeLlGUVDwOL9g,,,N,0,0,,,2013-06-23 13:01,2013-06-23 13:01,admin,admin
1009,86974,1346,11556,1473,1,0,N,N,N,CP_Phys,TT_Task,DT_FixedDrtn,RV_OK,TK_NotStart,OCEC18541,Pipe Culvert Construction,2971,789,0,100,0,400,400,100,0,0,0,,,,2013-10-19 16:00,2013-11-02 16:00,,2013-06-29 07:00,2013-07-10 17:00,2013-06-29 07:00,2013-07-10 17:00,2013-06-29 07:00,2013-07-10 17:00,,2013-10-19 16:00,2013-11-02 16:00,,PT_Normal,,,,,b1y/lkJkFE+TyZ4WNlknlg,dcQLN7yiR4+YnHrDFLmc8w,,,N,0,0,,,2013-06-23 13:01,2013-06-23 13:01,admin,admin
1010,86975,1346,11556,1473,1,0,N,N,N,CP_Phys,TT_Task,DT_FixedDrtn,RV_OK,TK_NotStart,OCEC18551,Installation of Grated Channels,2971,789,0,250,0,1000,1000,250,0,0,0,,,,2013-11-02 16:00,2013-12-09 16:00,,2013-07-13 07:00,2013-08-18 17:00,2013-07-13 07:00,2013-08-18 17:00,2013-07-13 07:00,2013-08-18 17:00,,2013-11-02 16:00,2013-12-09 16:00,,PT_Normal,,,,,3IIQMMLuXkOSRIRuJ/Jjpg,GVC6tSdgTXeyfKAZ5rlXVA,,,N,0,0,,,2013-06-23 13:01,2013-06-23 13:01,admin,admin
1011,86976,1346,11682,1473,1,50,N,N,N,CP_Phys,TT_Task,DT_FixedDrtn,RV_OK,TK_Active,OCEC10771,Shopdrawings Layout and Cross Sections for Roads no. 5,,989,0,140,0,0,0,140,0,0,0,,2013-01-30 16:00,,2013-09-10 16:00,2013-09-30 16:00,,2013-04-23 07:00,2013-05-12 17:00,2013-04-23 07:00,2013-05-12 17:00,2013-01-30 16:00,2013-02-19 16:00,,2013-09-10 16:00,2013-09-30 16:00,,PT_Normal,,,,,s7D4Qm1xs0CclRHolfTcbQ,Mp9TcfFBSdm3DPQctlz78Q,,,N,0,0,,,2013-06-23 13:01,2013-06-23 13:01,admin,admin
1012,86977,1346,11724,1473,1,100,N,N,N,CP_Phys,TT_Task,DT_FixedDrtn,RV_OK,TK_Complete,OCEC10761,Shopdrawings Layout and Cross Sections for Roads no. 5,,,,0,0,0,0,100,0,0,0,,2013-01-16 16:00,2013-01-30 16:00,2013-09-10 16:00,2013-09-10 16:00,,2013-04-23 00:00,2013-04-23 00:00,,,2013-01-16 16:00,2013-01-30 16:00,,,,,PT_Normal,,,,,xbx+rujXFEKrrGqdpL7NHQ,ZihK6kC/SraM0HfVce+IzQ,,,N,0,0,,,2013-06-23 13:01,2013-06-23 13:01,admin,admin
1013,86978,1346,11561,1473,1,0,N,N,N,CP_Phys,TT_Task,DT_FixedDrtn,RV_OK,TK_NotStart,OCEC11571,Concrete base for Feeder Pillar and High mast,2971,769,0,120,0,480,480,120,0,0,0,,,,2013-10-29 16:00,2013-11-16 16:00,,2013-07-13 07:00,2013-07-28 17:00,2013-07-13 07:00,2013-07-28 17:00,2013-07-13 07:00,2013-07-28 17:00,,2013-10-29 16:00,2013-11-16 16:00,,PT_Normal,,,,,7mOgIxwdjkqYtD16wp06UQ,ZpsZyHdARGqtYww79Re/BQ,,,N,0,0,,,2013-06-23 13:01,2013-06-23 13:01,admin,admin
1014,86979,1346,11561,1473,1,0,N,N,N,CP_Phys,TT_Task,DT_FixedDrtn,RV_OK,TK_NotStart,OCEC11581,Installation of Feed Pillar,2971,779,0,80,0,400,400,80,160,0,160,,,,2013-11-05 16:00,2013-11-17 16:00,,2013-07-17 07:00,2013-07-28 17:00,2013-07-17 07:00,2013-07-28 17:00,2013-07-17 07:00,2013-07-28 17:00,,2013-11-05 16:00,2013-11-17 16:00,,PT_Normal,,,,,OVzBqrOd9Eiv2MWcUhvClA,Te9jRifeRkSClc6lG0Gagw,,,N,0,0,,,2013-06-23 13:01,2013-06-23 13:01,admin,admin
1015,86980,1346,11561,1473,1,0,N,N,N,CP_Phys,TT_Task,DT_FixedDrtn,RV_OK,TK_NotStart,OCEC11591,Installation of Ornamental Lighting Columns,2971,779,10,70,0,840,840,70,140,0,140,,,,2013-11-10 16:00,2013-11-23 16:00,,2013-07-22 07:00,2013-07-30 17:00,2013-07-22 07:00,2013-07-30 17:00,2013-07-22 07:00,2013-07-30 17:00,,2013-11-10 16:00,2013-11-23 16:00,,PT_Normal,,,,,Bnh7CPfMSkKKhOmtMWMOeA,J+8Y2EUbRp6ObJF+JRFYMQ,,,N,0,0,,,2013-06-23 13:01,2013-06-23 13:01,admin,admin
1016,86981,1346,11561,1473,1,0,N,N,N,CP_Phys,TT_Task,DT_FixedDrtn,RV_OK,TK_NotStart,OCEC11601,Installation of High mast assembly,2971,769,0,100,0,500,500,100,200,0,200,,,,2013-11-05 16:00,2013-11-23 16:00,,2013-07-20 07:00,2013-07-31 17:00,2013-07-20 07:00,2013-07-31 17:00,2013-07-20 07:00,2013-07-31 17:00,,2013-11-05 16:00,2013-11-23 16:00,,PT_Normal,,,,,Q7ipppTLbkiaVIY9Yuidlg,P8MgxHhIRSemIZcyQWxsdw,,,N,0,0,,,2013-06-23 13:01,2013-06-23 13:01,admin,admin
1017,86982,1346,11561,1473,1,0,N,N,N,CP_Phys,TT_Task,DT_FixedDrtn,RV_OK,TK_NotStart,OCEC11611,Earthing for Feeder Pillar and the end of Street lighting circuit,2971,769,0,100,0,300,300,100,0,0,0,,,,2013-11-23 16:00,2013-12-07 16:00,,2013-08-03 07:00,2013-08-18 17:00,2013-08-03 07:00,2013-08-18 17:00,2013-08-03 07:00,2013-08-18 17:00,,2013-11-23 16:00,2013-12-07 16:00,,PT_Normal,,,,,lN0Fvv/5hkqnKhvXYrb+0Q,PajXsMLzSQO1Myp/Hiqysw,,,N,0,0,,,2013-06-23 13:01,2013-06-23 13:01,admin,admin
1018,86983,1346,11561,1473,1,0,N,N,N,CP_Phys,TT_Task,DT_FixedDrtn,RV_OK,TK_NotStart,OCEC11621,Power supply connections and Tests,2971,769,80,250,0,2250,2250,250,0,0,0,,,,2013-12-11 16:00,2014-01-15 16:00,,2013-08-25 07:00,2013-09-28 17:00,2013-08-25 07:00,2013-09-28 17:00,2013-08-25 07:00,2013-09-28 17:00,,2013-12-11 16:00,2014-01-15 16:00,,PT_Normal,,,,,FSfA+TgUskSSbfEG+LWYbw,Qw7ibeYzQ4KVfPERu6w4oA,,,N,0,0,,,2013-06-23 13:01,2013-06-23 13:01,admin,admin
1019,86984,1346,11561,1473,1,0,N,N,N,CP_Phys,TT_Task,DT_FixedDrtn,RV_OK,TK_NotStart,OCEC18631,Setting out and route survey,2971,819,0,40,0,80,80,40,40,0,40,,,,2013-10-19 16:00,2013-10-23 16:00,,2013-06-24 07:00,2013-06-29 17:00,2013-06-24 07:00,2013-06-29 17:00,2013-06-24 07:00,2013-06-29 17:00,,2013-10-19 16:00,2013-10-23 16:00,,PT_Normal,,,,,1bAr2gsDmkCpmwRGcPwppQ,5FzXCiEfSo61n9McriTNhQ,,,N,0,0,,,2013-06-23 13:01,2013-06-23 13:01,admin,admin
1020,86985,1346,11561,1473,1,0,N,N,N,CP_Phys,TT_Task,DT_FixedDrtn,RV_OK,TK_NotStart,OCEC18641,Excavation Works,2971,769,0,40,0,120,120,40,40,0,40,,,,2013-10-23 16:00,2013-10-29 16:00,,2013-07-07 07:00,2013-07-10 17:00,2013-07-07 07:00,2013-07-10 17:00,2013-07-07 07:00,2013-07-10 17:00,,2013-10-23 16:00,2013-10-29 16:00,,PT_Normal,,,,,7/FsIwk8mU+yie7ZRm64OA,HLa7n9INTfW34RUe2+fbtw,,,N,0,0,,,2013-06-23 13:01,2013-06-23 13:01,admin,admin
1021,86986,1346,11561,1473,1,0,N,N,N,CP_Phys,TT_Task,DT_FixedDrtn,RV_OK,TK_NotStart,OCEC18651,Inspection and Testing,2971,769,0,40,0,120,120,40,0,0,0,,,,2013-12-07 16:00,2013-12-11 16:00,,2013-08-19 07:00,2013-08-24 17:00,2013-08-19 07:00,2013-08-24 17:00,2013-08-19 07:00,2013-08-24 17:00,,2013-12-07 16:00,2013-12-11 16:00,,PT_Normal,,,,,9UOzRhqGKUu+tuwUxAMbVA,9s8i78D3TWmBHI0JFKQ3WQ,,,N,0,0,,,2013-06-23 13:01,2013-06-23 13:01,admin,admin
1022,86987,1346,11562,1473,1,0,N,N,N,CP_Phys,TT_Task,DT_FixedDrtn,RV_OK,TK_NotStart,OCEC11661,Install W-Beam Guardrail transition Section and terminal end,2994,1249,0,100,0,1800,1800,100,200,0,200,,,,2013-12-24 16:00,2014-01-07 16:00,,2013-06-29 07:00,2013-07-10 17:00,2013-06-29 07:00,2013-07-10 17:00,2013-06-29 07:00,2013-07-10 17:00,,2013-12-24 16:00,2014-01-07 16:00,,PT_Normal,,,,,1mAgklY3v0WZmmRCi3tWGw,JA22yaBuTTuApGQ1dxSpQA,,,N,0,0,,,2013-06-23 13:01,2013-06-23 13:01,admin,admin
1023,86988,1346,11562,1473,1,0,N,N,N,CP_Phys,TT_Task,DT_FixedDrtn,RV_OK,TK_NotStart,OCEC18661,Concrete Barrier Works,2969,1249,50,60,0,1080,1080,60,120,0,120,,,,2014-01-07 16:00,2014-01-15 16:00,,2013-07-13 07:00,2013-07-20 17:00,2013-07-13 07:00,2013-07-20 17:00,2013-07-13 07:00,2013-07-20 17:00,,2014-01-07 16:00,2014-01-15 16:00,,PT_Normal,,,,,HkvNju+ZDEKURm+1x6yFJg,15bK55GQQ/ChJ4KJWyK9rg,,,N,0,0,,,2013-06-23 13:01,2013-06-23 13:01,admin,admin
1024,86989,1346,11562,1473,1,0,N,N,N,CP_Phys,TT_Task,DT_FixedDrtn,RV_OK,TK_NotStart,OCEC18671,Chain Link Fence to Master Plan Boundary,,1199,510,250,0,0,0,250,0,0,0,,,,2013-12-11 16:00,2014-01-15 16:00,,2013-06-23 07:00,2013-07-27 17:00,2013-06-23 07:00,2013-07-27 17:00,2013-06-23 07:00,2013-07-27 17:00,,2013-12-11 16:00,2014-01-15 16:00,,PT_Normal,,,,,HUTks1XtMkOKRxKL3yIk9w,l9xGkR1NT3u8xaqgw1NfNg,,,N,0,0,,,2013-06-23 13:01,2013-06-23 13:01,admin,admin
1025,86990,1346,11562,1473,1,0,N,N,N,CP_Phys,TT_Task,DT_FixedDrtn,RV_OK,TK_NotStart,OCEC19681,Setting out and Survey Works,2971,1249,0,30,0,60,60,30,30,0,30,,,,2013-12-21 16:00,2013-12-24 16:00,,2013-06-24 07:00,2013-06-26 17:00,2013-06-24 07:00,2013-06-26 17:00,2013-06-24 07:00,2013-06-26 17:00,,2013-12-21 16:00,2013-12-24 16:00,,PT_Normal,,,,,ifVvqUEm7EOtrDM4B/wc/g,SnFaVNBuRvWNm/Vxs3jFww,,,N,0,0,,,2013-06-23 13:01,2013-06-23 13:01,admin,admin
1026,86991,1346,11563,1473,1,0,N,N,N,CP_Phys,TT_Task,DT_FixedDrtn,RV_OK,TK_NotStart,OCEC11511,Trench excavation for low voltage cable,2971,549,0,120,0,240,240,120,120,0,120,,,,2013-09-15 16:00,2013-10-01 16:00,,2013-06-29 07:00,2013-07-14 17:00,2013-06-29 07:00,2013-07-14 17:00,2013-06-29 07:00,2013-07-14 17:00,,2013-09-15 16:00,2013-10-01 16:00,,PT_Normal,,,,,KBCxQ/HafkyokhuiIVzD6g,5FgOjSGNQ62NcCBa940vKw,,,N,0,0,,,2013-06-23 13:01,2013-06-23 13:01,admin,admin
1027,86992,1346,11563,1473,1,0,N,N,N,CP_Phys,TT_Task,DT_FixedDrtn,RV_OK,TK_NotStart,OCEC11521,Bed preparation,2984,549,0,120,0,240,240,120,120,0,120,,,,2013-09-23 16:00,2013-10-09 16:00,,2013-07-07 07:00,2013-07-22 17:00,2013-07-07 07:00,2013-07-22 17:00,2013-07-07 07:00,2013-07-22 17:00,,2013-09-23 16:00,2013-10-09 16:00,,PT_Normal,,,,,lcu8Txu1CEiJT/DB+CU1Sw,lPmxf56BR8261eeUx1EwbQ,,,N,0,0,,,2013-06-23 13:01,2013-06-23 13:01,admin,admin
1028,86993,1346,11563,1473,1,0,N,N,N,CP_Phys,TT_Task,DT_FixedDrtn,RV_OK,TK_NotStart,OCEC11531,Low Voltage Cable laying,2971,689,0,120,0,360,360,120,240,0,240,,,,2013-11-06 16:00,2013-11-26 16:00,,2013-07-31 07:00,2013-08-19 17:00,2013-07-31 07:00,2013-08-19 17:00,2013-07-31 07:00,2013-08-19 17:00,,2013-11-06 16:00,2013-11-26 16:00,,PT_Normal,,,,,crLCdDjMuU24RejoKy6wJg,kbQoZwgRR32o//dZ8pb7CQ,,,N,0,0,,,2013-06-23 13:01,2013-06-23 13:01,admin,admin
1029,86994,1346,11563,1473,1,0,N,N,N,CP_Phys,TT_Task,DT_FixedDrtn,RV_OK,TK_NotStart,OCEC11541,Backfilling and compaction,2984,689,0,100,0,600,600,100,300,0,300,,,,2013-12-18 16:00,2014-01-01 16:00,,2013-09-11 07:00,2013-09-24 17:00,2013-09-11 07:00,2013-09-24 17:00,2013-09-11 07:00,2013-09-24 17:00,,2013-12-18 16:00,2014-01-01 16:00,,PT_Normal,,,,,KKDoLKBa5EiqBG8yFBD0cw,kn/23LqDRvm4EyK/axnpcg,,,N,0,0,,,2013-06-23 13:01,2013-06-23 13:01,admin,admin
1030,86995,1346,11563,1473,1,0,N,N,N,CP_Phys,TT_Task,DT_FixedDrtn,RV_OK,TK_NotStart,OCEC11551,Marker post  and marker plates fixing,2971,689,0,100,0,300,300,100,0,0,0,,,,2014-01-01 16:00,2014-01-15 16:00,,2013-09-25 07:00,2013-10-08 17:00,2013-09-25 07:00,2013-10-08 17:00,2013-09-25 07:00,2013-10-08 17:00,,2014-01-01 16:00,2014-01-15 16:00,,PT_Normal,,,,,oRiA9L7QLUiO9sYWJ6Vnbg,+HK5apLFRX6M24sV9sUG+Q,,,N,0,0,,,2013-06-23 13:01,2013-06-23 13:01,admin,admin
1031,86996,1346,11563,1473,1,0,N,N,N,CP_Phys,TT_Task,DT_FixedDrtn,RV_OK,TK_NotStart,OCEC11561,Install AC pipe ducts,2980,549,0,120,0,720,720,120,120,0,120,,,,2013-10-01 16:00,2013-10-19 16:00,,2013-07-15 07:00,2013-07-30 17:00,2013-07-15 07:00,2013-07-30 17:00,2013-07-15 07:00,2013-07-30 17:00,,2013-10-01 16:00,2013-10-19 16:00,,PT_Normal,,,,,JiNAUWZtrUO/rJMm3qZk0w,oxZEcpRSTOasN72R7Ggb0g,,,N,0,0,,,2013-06-23 13:01,2013-06-23 13:01,admin,admin
1032,86997,1346,11563,1473,1,0,N,N,N,CP_Phys,TT_Task,DT_FixedDrtn,RV_OK,TK_NotStart,OCEC13081,Setting out and route survey,2971,549,0,30,0,60,60,30,30,0,30,,,,2013-09-10 16:00,2013-09-15 16:00,,2013-06-24 07:00,2013-06-26 17:00,2013-06-24 07:00,2013-06-26 17:00,2013-06-24 07:00,2013-06-26 17:00,,2013-09-10 16:00,2013-09-15 16:00,,PT_Normal,,,,,aCoCoeXz6k63JFlYCkwFMg,rlEMAXcETlK280k6YwYlMA,,,N,0,0,,,2013-06-23 13:01,2013-06-23 13:01,admin,admin
1033,86998,1346,11563,1473,1,0,N,N,N,CP_Phys,TT_Task,DT_FixedDrtn,RV_OK,TK_NotStart,OCEC18561,Cable termination,2971,689,0,100,0,400,400,100,200,0,200,,,,2013-11-26 16:00,2013-12-10 16:00,,2013-08-20 07:00,2013-09-02 17:00,2013-08-20 07:00,2013-09-02 17:00,2013-08-20 07:00,2013-09-02 17:00,,2013-11-26 16:00,2013-12-10 16:00,,PT_Normal,,,,,yAg4w8+5lUCdXhNYME6d9A,1OqHndO1SFC5GSexYgpIUw,,,N,0,0,,,2013-06-23 13:01,2013-06-23 13:01,admin,admin
1034,86999,1346,11563,1473,1,0,N,N,N,CP_Phys,TT_Task,DT_FixedDrtn,RV_OK,TK_NotStart,OCEC18571,Inspection and Testing,2971,689,0,60,0,120,120,60,0,0,0,,,,2013-12-10 16:00,2013-12-18 16:00,,2013-09-03 07:00,2013-09-10 17:00,2013-09-03 07:00,2013-09-10 17:00,2013-09-03 07:00,2013-09-10 17:00,,2013-12-10 16:00,2013-12-18 16:00,,PT_Normal,,,,,mo8ilETGJEyVGqceKSPbVg,AhDwaWc8Qxe6gceXaRuKsg,,,N,0,0,,,2013-06-23 13:01,2013-06-23 13:01,admin,admin
1035,87000,1346,11569,1473,1,0,N,N,N,CP_Phys,TT_Task,DT_FixedDrtn,RV_OK,TK_NotStart,OCEC11441,Removal of Structures and Obstructions,,1079,260,140,0,0,0,140,0,0,0,,,,2013-09-23 16:00,2013-10-13 16:00,,2013-04-23 07:00,2013-05-12 17:00,2013-04-23 07:00,2013-05-12 17:00,2013-04-23 07:00,2013-05-12 17:00,,2013-09-23 16:00,2013-10-13 16:00,,PT_Normal,,,,,7/dWCnRnmkusRccwgWg2ug,Iu9k1aX4RfqHkDHCSMVFqw,,,N,0,0,,,2013-06-23 13:01,2013-06-23 13:01,admin,admin
1036,87001,1346,11569,1473,1,0,N,N,N,CP_Phys,TT_Task,DT_FixedDrtn,RV_OK,TK_NotStart,OCEC11451,Embankment filling and sub grade preparation,2984,1013,0,120,0,1800,1800,120,720,0,720,,,,2013-11-30 10:00,2013-12-16 10:00,,2013-07-06 07:00,2013-07-21 17:00,2013-07-06 07:00,2013-07-21 17:00,2013-07-06 07:00,2013-07-21 17:00,,2013-11-30 10:00,2013-12-16 10:00,,PT_Normal,,,,,seq+1LbJDEyqjQoxmRGpjQ,dDvuzMQzTIelRnAc5n8iDQ,,,N,0,0,,,2013-06-23 13:01,2013-06-23 13:01,admin,admin
1037,87002,1346,11569,1473,1,0,N,N,N,CP_Phys,TT_Task,DT_FixedDrtn,RV_OK,TK_NotStart,OCEC11461,Granular sub base course Class B - 150 mm thick,3001,1013,0,60,0,720,720,60,360,0,360,,,,2013-12-08 10:00,2013-12-16 10:00,,2013-07-14 07:00,2013-07-21 17:00,2013-07-14 07:00,2013-07-21 17:00,2013-07-14 07:00,2013-07-21 17:00,,2013-12-08 10:00,2013-12-16 10:00,,PT_Normal,,,,,ya9t2hyvv0mgVjPl1XNNhg,s1FFoRnjQZCZ+bHnveGYRg,,,N,0,0,,,2013-06-23 13:01,2013-06-23 13:01,admin,admin
1038,87003,1346,11569,1473,1,0,N,N,N,CP_Phys,TT_Task,DT_FixedDrtn,RV_OK,TK_NotStart,OCEC11471,Aggregate base course Class A - 100 mm and 150 mm thick,2984,1013,0,30,0,330,330,30,150,0,150,,,,2013-12-22 10:00,2013-12-25 10:00,,2013-07-28 07:00,2013-07-30 17:00,2013-07-28 07:00,2013-07-30 17:00,2013-07-28 07:00,2013-07-30 17:00,,2013-12-22 10:00,2013-12-25 10:00,,PT_Normal,,,,,YMgYxDZi30KnQIBdLzdY0w,ppfGf3mRQhGw+X5r8mX6FA,,,N,0,0,,,2013-06-23 13:01,2013-06-23 13:01,admin,admin
1039,87004,1346,11569,1473,1,0,N,N,N,CP_Phys,TT_Task,DT_FixedDrtn,RV_OK,TK_NotStart,OCEC11481,Bituminous prime coat and bituminous base course Class A - 50 mm thick,2969,1013,0,16,0,136,136,16,80,0,80,,,,2013-12-25 10:00,2013-12-28 16:00,,2013-07-31 07:00,2013-08-03 13:00,2013-07-31 07:00,2013-08-03 13:00,2013-07-31 07:00,2013-08-03 13:00,,2013-12-25 10:00,2013-12-28 16:00,,PT_Normal,,,,,48c8cE+oMEa1VsEkt6Rrew,QG317wORT7+l64i5FIhWoA,,,N,0,0,,,2013-06-23 13:01,2013-06-23 13:01,admin,admin
1040,87005,1346,11569,1473,1,0,N,N,N,CP_Phys,TT_Task,DT_FixedDrtn,RV_OK,TK_NotStart,OCEC11491,Bituminous take coat and bituminous wearing course Class A - 50 mm thick,,1013,324,140,0,1225,1225,140,875,0,875,,,,2013-12-28 16:00,2014-01-15 16:00,,2013-08-03 13:00,2013-08-25 13:00,2013-08-03 13:00,2013-08-25 13:00,2013-08-03 13:00,2013-08-25 13:00,,2013-12-28 16:00,2014-01-15 16:00,,PT_Normal,,,,,hrPAS3Gb7kWcbTFoKFVa9A,ZuFZehAWSF6oQGzU50gpTw,,,N,0,0,,,2013-06-23 13:01,2013-06-23 13:01,admin,admin
1041,87006,1346,11569,1473,1,0,N,N,N,CP_Phys,TT_Task,DT_FixedDrtn,RV_OK,TK_NotStart,OCEC11501,Unclassified excavation and removal,2969,1013,0,80,0,1040,1040,80,480,0,480,,,,2013-11-24 10:00,2013-12-04 10:00,,2013-06-30 07:00,2013-07-09 17:00,2013-06-30 07:00,2013-07-09 17:00,2013-06-30 07:00,2013-07-09 17:00,,2013-11-24 10:00,2013-12-04 10:00,,PT_Normal,,,,,oA09mK+DxEyfnAFZA9KELg,vrrgWvOXQninjL03Xd/Qig,,,N,0,0,,,2013-06-23 13:01,2013-06-23 13:01,admin,admin
1042,87007,1346,11569,1473,1,0,N,N,N,CP_Phys,TT_Task,DT_FixedDrtn,RV_OK,TK_NotStart,OCEC11691,Clearing and grubbing,2971,819,0,40,0,320,320,40,160,0,160,,,,2013-10-13 16:00,2013-10-19 16:00,,2013-06-18 07:00,2013-06-23 17:00,2013-06-18 07:00,2013-06-23 17:00,2013-06-18 07:00,2013-06-23 17:00,,2013-10-13 16:00,2013-10-19 16:00,,PT_Normal,,,,,G6I0B5d8bkuArYFzAplkGw,f+vZMseIRJ6V6xQx+YENSA,,,N,0,0,,,2013-06-23 13:01,2013-06-23 13:01,admin,admin
1043,87008,1346,11569,1473,1,0,N,N,N,CP_Phys,TT_Task,DT_FixedDrtn,RV_OK,TK_NotStart,OCEC11711,Setting out and route survey,2983,819,0,40,0,80,80,40,40,0,40,,,,2013-10-19 16:00,2013-10-23 16:00,,2013-06-24 07:00,2013-06-29 17:00,2013-06-24 07:00,2013-06-29 17:00,2013-06-24 07:00,2013-06-29 17:00,,2013-10-19 16:00,2013-10-23 16:00,,PT_Normal,,,,,w4ZFXXXyN0WM+OIb+W4vSQ,zQtjVOOXTYGDY1yxBqFDIw,,,N,0,0,,,2013-06-23 13:01,2013-06-23 13:01,admin,admin
1044,87009,1346,11569,1473,1,0,N,N,N,CP_Phys,TT_Task,DT_FixedDrtn,RV_OK,TK_NotStart,OCEC11641,Precast Concrete Curb,2981,1013,0,40,0,1240,1240,40,0,0,0,,,,2013-12-16 10:00,2013-12-22 10:00,,2013-07-22 07:00,2013-07-27 17:00,2013-07-22 07:00,2013-07-27 17:00,2013-07-22 07:00,2013-07-27 17:00,,2013-12-16 10:00,2013-12-22 10:00,,PT_Normal,,,,,X/1DmPGLGUixQmLloXXtfA,GypTrBLARti48OaCAzXHAQ,,,N,0,0,,,2013-06-23 13:01,2013-06-23 13:01,admin,admin
1045,87010,1346,11545,1473,1,100,N,N,N,CP_Phys,TT_Task,DT_FixedDrtn,RV_OK,TK_Complete,OCEC10461,Survey works and setting out,,,,0,0,0,0,30,0,0,0,,2013-01-16 16:00,2013-01-21 16:00,2013-08-14 16:00,2013-08-14 16:00,,2013-04-23 00:00,2013-04-23 00:00,,,2013-01-16 16:00,2013-01-21 16:00,,,,,PT_Normal,,,,,d6IjBm7ULkKbcSGMJr6UWA,3UXs1lOQT+yb6m6z2KE2Bg,,,N,0,0,,,2013-06-23 13:01,2013-06-23 13:01,admin,admin
1046,87011,1346,11607,1473,1,0,N,N,N,CP_Phys,TT_Task,DT_FixedDrtn,RV_OK,TK_NotStart,OCEC20011,Precast Concrete Curb,2981,679,0,20,0,620,620,20,0,0,0,,,,2014-01-05 16:00,2014-01-07 16:00,,2013-09-30 07:00,2013-10-01 17:00,2013-09-30 07:00,2013-10-01 17:00,2013-09-30 07:00,2013-10-01 17:00,,2014-01-05 16:00,2014-01-07 16:00,,PT_Normal,,,,,fN8J1FRcwk26F6rzyMs5gQ,D8og8yWVSESs9Sq6OSLDhQ,,,N,0,0,,,2013-06-23 13:01,2013-06-23 13:01,admin,admin
1047,87012,1346,11607,1473,1,0,N,N,N,CP_Phys,TT_Task,DT_FixedDrtn,RV_OK,TK_NotStart,OCEC18461,Removal of Structures and Obstructions,,679,0,10,0,0,0,10,0,0,0,,,,2013-12-24 16:00,2013-12-25 16:00,,2013-09-18 07:00,2013-09-18 17:00,2013-09-18 07:00,2013-09-18 17:00,2013-09-18 07:00,2013-09-18 17:00,,2013-12-24 16:00,2013-12-25 16:00,,PT_Normal,,,,,kyDhoTnZJkmPdaZVbSo/wg,VWiBPl+YTPCOD8bu2xZKYw,,,N,0,0,,,2013-06-23 13:01,2013-06-23 13:01,admin,admin
1048,87013,1346,11607,1473,1,0,N,N,N,CP_Phys,TT_Task,DT_FixedDrtn,RV_OK,TK_NotStart,OCEC18471,Embankment filling and sub grade preparation,3001,679,0,20,0,560,560,20,500,0,500,,,,2013-12-31 16:00,2014-01-04 16:00,,2013-09-25 07:00,2013-09-28 17:00,2013-09-25 07:00,2013-09-28 17:00,2013-09-25 07:00,2013-09-28 17:00,,2013-12-31 16:00,2014-01-04 16:00,,PT_Normal,,,,,2RMyCxLhCEi1WCzlmCSfCA,tYRWbFXUTyq9rcxtzJ3+oA,,,N,0,0,,,2013-06-23 13:01,2013-06-23 13:01,admin,admin
1049,87014,1346,11607,1473,1,0,N,N,N,CP_Phys,TT_Task,DT_FixedDrtn,RV_OK,TK_NotStart,OCEC18481,Granular sub base course Class B - 150 mm thick,3001,679,0,20,0,560,560,20,500,0,500,,,,2014-01-01 16:00,2014-01-05 16:00,,2013-09-28 07:00,2013-09-29 17:00,2013-09-28 07:00,2013-09-29 17:00,2013-09-28 07:00,2013-09-29 17:00,,2014-01-01 16:00,2014-01-05 16:00,,PT_Normal,,,,,eQwCdSTsjkq5wInWeqGwSg,Cl3L01zEQpqL+GbEj4ntRA,,,N,0,0,,,2013-06-23 13:01,2013-06-23 13:01,admin,admin
1050,87015,1346,11607,1473,1,0,N,N,N,CP_Phys,TT_Task,DT_FixedDrtn,RV_OK,TK_NotStart,OCEC18491,Aggregate base course Class A - 100 mm and 150 mm thick,3001,679,0,20,0,220,220,20,100,0,100,,,,2014-01-07 16:00,2014-01-11 16:00,,2013-10-02 07:00,2013-10-05 17:00,2013-10-02 07:00,2013-10-05 17:00,2013-10-02 07:00,2013-10-05 17:00,,2014-01-07 16:00,2014-01-11 16:00,,PT_Normal,,,,,OmOfQeoXxEuOuOk+RxPnwQ,DZadftAjSzOb+OBm6+w/Ng,,,N,0,0,,,2013-06-23 13:01,2013-06-23 13:01,admin,admin
1051,87016,1346,11607,1473,1,0,N,N,N,CP_Phys,TT_Task,DT_FixedDrtn,RV_OK,TK_NotStart,OCEC18501,Bituminous prime coat and bituminous base course Class A - 50 mm thick,2969,679,0,20,0,215,215,20,140,0,140,,,,2014-01-11 16:00,2014-01-13 16:00,,2013-10-06 07:00,2013-10-07 17:00,2013-10-06 07:00,2013-10-07 17:00,2013-10-06 07:00,2013-10-07 17:00,,2014-01-11 16:00,2014-01-13 16:00,,PT_Normal,,,,,2OxHL53ZqUmA5klMl11Yvg,k+l8+MInR4WKhQF/bmnBXw,,,N,0,0,,,2013-06-23 13:01,2013-06-23 13:01,admin,admin
1052,87017,1346,11607,1473,1,0,N,N,N,CP_Phys,TT_Task,DT_FixedDrtn,RV_OK,TK_NotStart,OCEC18511,Bituminous take coat and bituminous wearing course Class A - 50 mm thick,2969,679,0,20,0,240,240,20,160,0,160,,,,2014-01-13 16:00,2014-01-15 16:00,,2013-10-08 07:00,2013-10-09 17:00,2013-10-08 07:00,2013-10-09 17:00,2013-10-08 07:00,2013-10-09 17:00,,2014-01-13 16:00,2014-01-15 16:00,,PT_Normal,,,,,qvBB1DtGRkyaA9CTeAZW3g,jL8GJ0V5T+Gr4eO7BR2crw,,,N,0,0,,,2013-06-23 13:01,2013-06-23 13:01,admin,admin
1053,87018,1346,11607,1473,1,0,N,N,N,CP_Phys,TT_Task,DT_FixedDrtn,RV_OK,TK_NotStart,OCEC18521,Unclassified excavation and removal,3001,679,0,20,0,260,260,20,120,0,120,,,,2013-12-29 16:00,2013-12-31 16:00,,2013-09-23 07:00,2013-09-24 17:00,2013-09-23 07:00,2013-09-24 17:00,2013-09-23 07:00,2013-09-24 17:00,,2013-12-29 16:00,2013-12-31 16:00,,PT_Normal,,,,,asnhZuKLvUWasPnGhC+agw,1F5Osvb/QLObW+bbprQP7g,,,N,0,0,,,2013-06-23 13:01,2013-06-23 13:01,admin,admin
1054,87019,1346,11607,1473,1,0,N,N,N,CP_Phys,TT_Task,DT_FixedDrtn,RV_OK,TK_NotStart,OCEC20091,Clearing and grubbing,2969,679,0,10,0,80,80,10,40,0,40,,,,2013-12-25 16:00,2013-12-28 16:00,,2013-09-21 07:00,2013-09-21 17:00,2013-09-21 07:00,2013-09-21 17:00,2013-09-21 07:00,2013-09-21 17:00,,2013-12-25 16:00,2013-12-28 16:00,,PT_Normal,,,,,wAdpyDH7aE+MwW9TTrGftg,zKXIQW+dTSudNwfDx1jPHw,,,N,0,0,,,2013-06-23 13:01,2013-06-23 13:01,admin,admin
1055,87020,1346,11607,1473,1,0,N,N,N,CP_Phys,TT_Task,DT_FixedDrtn,RV_OK,TK_NotStart,OCEC20131,Setting out and route survey,2983,679,0,10,0,20,20,10,10,0,10,,,,2013-12-28 16:00,2013-12-29 16:00,,2013-09-22 07:00,2013-09-22 17:00,2013-09-22 07:00,2013-09-22 17:00,2013-09-22 07:00,2013-09-22 17:00,,2013-12-28 16:00,2013-12-29 16:00,,PT_Normal,,,,,ocBQo6MbG0ebGn8GmDGxYg,H8T4pCYYT2+2lPaTD8VkDA,,,N,0,0,,,2013-06-23 13:01,2013-06-23 13:01,admin,admin
1056,87021,1346,11567,1473,1,0,N,N,N,CP_Phys,TT_Task,DT_FixedDrtn,RV_OK,TK_NotStart,OCEC20001,Precast Concrete tile Paving 60 mm thick,2969,1099,0,60,0,1920,1920,60,60,0,60,,,,2013-12-03 16:00,2013-12-11 16:00,,2013-06-29 07:00,2013-07-06 17:00,2013-06-29 07:00,2013-07-06 17:00,2013-06-29 07:00,2013-07-06 17:00,,2013-12-03 16:00,2013-12-11 16:00,,PT_Normal,,,,,RmBVOwJNuUKljXaUQURi0A,BFhh25oHRRa4zXHznONd/A,,,N,0,0,,,2013-06-23 13:01,2013-06-23 13:01,admin,admin
1057,87022,1346,11567,1473,1,0,N,N,N,CP_Phys,TT_Task,DT_FixedDrtn,RV_OK,TK_NotStart,OCEC20021,Traffic Signs,2969,1169,0,60,0,960,960,60,0,0,0,,,,2013-12-28 16:00,2014-01-05 16:00,,2013-07-13 07:00,2013-07-20 17:00,2013-07-13 07:00,2013-07-20 17:00,2013-07-13 07:00,2013-07-20 17:00,,2013-12-28 16:00,2014-01-05 16:00,,PT_Normal,,,,,3ZmJv2Oo+kSR5nYE6NCdJQ,qiiNEZkPSUa1WcZ8a1na0w,,,N,0,0,,,2013-06-23 13:01,2013-06-23 13:01,admin,admin
1058,87023,1346,11567,1473,1,0,N,N,N,CP_Phys,TT_Task,DT_FixedDrtn,RV_OK,TK_NotStart,OCEC20041,Riprap Works,2969,1099,0,60,0,1200,1200,60,240,0,240,,,,2013-12-03 16:00,2013-12-11 16:00,,2013-06-29 07:00,2013-07-06 17:00,2013-06-29 07:00,2013-07-06 17:00,2013-06-29 07:00,2013-07-06 17:00,,2013-12-03 16:00,2013-12-11 16:00,,PT_Normal,,,,,iET2JB/PnUi5Tyk9v02BZA,bL0+PmiASdKswTazUKUdBA,,,N,0,0,,,2013-06-23 13:01,2013-06-23 13:01,admin,admin
1059,87024,1346,11567,1473,1,0,N,N,N,CP_Phys,TT_Task,DT_FixedDrtn,RV_OK,TK_NotStart,OCEC20141,Gabions Works,2969,1099,0,60,0,1200,1200,60,240,0,240,,,,2013-12-03 16:00,2013-12-11 16:00,,2013-06-29 07:00,2013-07-06 17:00,2013-06-29 07:00,2013-07-06 17:00,2013-06-29 07:00,2013-07-06 17:00,,2013-12-03 16:00,2013-12-11 16:00,,PT_Normal,,,,,OfV3Elg4eEaqCS4QMfKrBA,9a71k/bTSFWBKvwHQT4qaA,,,N,0,0,,,2013-06-23 13:01,2013-06-23 13:01,admin,admin
1060,87025,1346,11567,1473,1,0,N,N,N,CP_Phys,TT_Task,DT_FixedDrtn,RV_OK,TK_NotStart,OCEC20151,Ditch Lining Works,2981,1099,0,60,0,1200,1200,60,240,0,240,,,,2013-12-03 16:00,2013-12-11 16:00,,2013-06-29 07:00,2013-07-06 17:00,2013-06-29 07:00,2013-07-06 17:00,2013-06-29 07:00,2013-07-06 17:00,,2013-12-03 16:00,2013-12-11 16:00,,PT_Normal,,,,,RgfWAFuU9EmwqeRmNVeueA,gGrtlh/zSQ2E5PKlVND+ng,,,N,0,0,,,2013-06-23 13:01,2013-06-23 13:01,admin,admin
1061,87026,1346,11567,1473,1,0,N,N,N,CP_Phys,TT_Task,DT_FixedDrtn,RV_OK,TK_NotStart,OCEC20161,Coastal Protection Works,2971,1099,420,250,0,3250,3250,250,500,0,500,,,,2013-12-11 16:00,2014-01-15 16:00,,2013-07-07 07:00,2013-08-12 17:00,2013-07-07 07:00,2013-08-12 17:00,2013-07-07 07:00,2013-08-12 17:00,,2013-12-11 16:00,2014-01-15 16:00,,PT_Normal,,,,,bjHvWgPcO0ugtnkrA6RavA,n0lYhv/gTlyvP14ppDsTsA,,,N,0,0,,,2013-06-23 13:01,2013-06-23 13:01,admin,admin
1062,87027,1346,11567,1473,1,0,N,N,N,CP_Phys,TT_Task,DT_FixedDrtn,RV_OK,TK_NotStart,OCEC20171,Interlok Tiles,2969,1269,590,140,0,2240,2240,140,0,0,0,,,,2013-12-28 16:00,2014-01-15 16:00,,2013-06-29 07:00,2013-07-16 17:00,2013-06-29 07:00,2013-07-16 17:00,2013-06-29 07:00,2013-07-16 17:00,,2013-12-28 16:00,2014-01-15 16:00,,PT_Normal,,,,,sn9El8SeGUy1oorC0IafZQ,2dxvOoxMQEO3tXndoyO+ZA,,,N,0,0,,,2013-06-23 13:01,2013-06-23 13:01,admin,admin
1063,87028,1346,11567,1473,1,0,N,N,N,CP_Phys,TT_Task,DT_FixedDrtn,RV_OK,TK_NotStart,OCEC20181,Road Marking and Studs,2969,1169,490,140,0,2800,2800,140,560,0,560,,,,2013-12-28 16:00,2014-01-15 16:00,,2013-07-13 07:00,2013-07-30 17:00,2013-07-13 07:00,2013-07-30 17:00,2013-07-13 07:00,2013-07-30 17:00,,2013-12-28 16:00,2014-01-15 16:00,,PT_Normal,,,,,n8B/jOXtEkuzkeD8umADqw,0wka2hG6R9GVXHCOd80gyg,,,N,0,0,,,2013-06-23 13:01,2013-06-23 13:01,admin,admin
1064,87029,1346,11712,1473,1,100,N,N,N,CP_Phys,TT_Task,DT_FixedDrtn,RV_OK,TK_Complete,OCEC10871,Shopdrawings Layout and Cross Sections for Roads no. 6,,,,0,0,0,0,120,0,0,0,,2013-01-16 16:00,2013-02-03 16:00,2013-08-14 16:00,2013-08-14 16:00,,2013-04-23 00:00,2013-04-23 00:00,,,2013-01-16 16:00,2013-02-03 16:00,,,,,PT_Normal,,,,,e59fe6yw2UKzwEXMxOHpXg,r8uYICXJTGGAmkbDy0d8rQ,,,N,0,0,,,2013-06-23 13:01,2013-06-23 13:01,admin,admin
1065,87030,1346,11735,1473,1,50,N,N,N,CP_Phys,TT_Task,DT_FixedDrtn,RV_OK,TK_Active,OCEC10881,Shopdrawings Layout and Cross Sections for Roads no. 6,,799,0,140,0,0,0,140,0,0,0,,2013-02-03 16:00,,2013-08-14 16:00,2013-09-03 16:00,,2013-04-23 07:00,2013-05-12 17:00,2013-04-23 07:00,2013-05-12 17:00,2013-02-03 16:00,2013-02-23 16:00,,2013-08-14 16:00,2013-09-03 16:00,,PT_Normal,,,,,0g5+ggs6+kaN1vlvHQO65A,fmDRTSy2R5Guc2svt1BZSA,,,N,0,0,,,2013-06-23 13:01,2013-06-23 13:01,admin,admin
1066,87031,1346,11572,1473,1,100,N,N,N,CP_Phys,TT_Task,DT_FixedDrtn,RV_OK,TK_Complete,OCEC18381,Setting out and route survey,2983,,,0,80,0,80,40,40,40,0,,2013-02-12 00:00,2013-02-18 00:00,2013-09-29 16:00,2013-09-29 16:00,,2013-06-23 17:00,2013-06-23 17:00,,,2013-05-26 16:00,2013-06-01 16:00,,,,,PT_Normal,,,,,C0D0qLXF3EyhCKGIUxwKzA,OVSVVoxbSoiEBr5kw8BfkQ,,,N,80,40,,,2013-06-23 13:01,2013-06-23 13:01,admin,admin
1067,87032,1346,11572,1473,1,40,N,N,N,CP_Phys,TT_Task,DT_FixedDrtn,RV_OK,TK_Active,OCEC18391,Trench excavation,2971,719,0,120,0,840,840,120,360,0,360,,2013-02-19 00:00,,2013-10-05 16:00,2013-10-21 16:00,,2013-06-24 07:00,2013-07-09 17:00,2013-06-24 07:00,2013-07-09 17:00,2013-06-01 16:00,2013-06-17 16:00,,2013-10-05 16:00,2013-10-21 16:00,,PT_Normal,,,,,Orm7voSyT0K598ZY4Y8eNg,I/0rT+e2Sw2syqsOEyLvUA,,,N,0,0,,,2013-06-23 13:01,2013-06-23 13:01,admin,admin
1068,87033,1346,11572,1473,1,0,N,N,N,CP_Phys,TT_Task,DT_FixedDrtn,RV_OK,TK_NotStart,OCEC18401,"Bedding, Compaction and Levelling",2984,789,0,60,0,540,540,60,240,0,240,,,,2013-10-14 16:00,2013-10-22 16:00,,2013-06-24 07:00,2013-07-01 17:00,2013-06-24 07:00,2013-07-01 17:00,2013-06-24 07:00,2013-07-01 17:00,,2013-10-14 16:00,2013-10-22 16:00,,PT_Normal,,,,,GOmcz9nEaEG7HNH5V3cG+w,Lrbcl9H2Rm2DJ9XCPQgZdg,,,N,0,0,,,2013-06-23 13:01,2013-06-23 13:01,admin,admin
1069,87034,1346,11572,1473,1,0,N,N,N,CP_Phys,TT_Task,DT_FixedDrtn,RV_OK,TK_NotStart,OCEC18411,Pipe lowering,2971,789,0,80,0,1040,1040,80,160,0,160,,,,2013-12-14 16:00,2013-12-24 16:00,,2013-08-24 07:00,2013-09-02 17:00,2013-08-24 07:00,2013-09-02 17:00,2013-08-24 07:00,2013-09-02 17:00,,2013-12-14 16:00,2013-12-24 16:00,,PT_Normal,,,,,s4t8FZk9wkCvBQAcWgCKyw,4HyiPkTwTRy8PVXJkx4OgQ,,,N,0,0,,,2013-06-23 13:01,2013-06-23 13:01,admin,admin
1070,87035,1346,11572,1473,1,0,N,N,N,CP_Phys,TT_Task,DT_FixedDrtn,RV_OK,TK_NotStart,OCEC18421,Pipe joining,2969,789,0,80,0,880,880,80,80,0,80,,,,2013-12-18 16:00,2013-12-30 16:00,,2013-08-28 07:00,2013-09-08 17:00,2013-08-28 07:00,2013-09-08 17:00,2013-08-28 07:00,2013-09-08 17:00,,2013-12-18 16:00,2013-12-30 16:00,,PT_Normal,,,,,FxNyNAdAQEiBH2qk6z/LoQ,JbT5jk1GRL+fVS85PU3WwA,,,N,0,0,,,2013-06-23 13:01,2013-06-23 13:01,admin,admin
1071,87036,1346,11572,1473,1,0,N,N,N,CP_Phys,TT_Task,DT_FixedDrtn,RV_OK,TK_NotStart,OCEC18431,Backfilling and Compaction,3001,789,0,80,0,880,880,80,400,0,400,,,,2013-12-30 16:00,2014-01-11 16:00,,2013-09-09 07:00,2013-09-18 17:00,2013-09-09 07:00,2013-09-18 17:00,2013-09-09 07:00,2013-09-18 17:00,,2013-12-30 16:00,2014-01-11 16:00,,PT_Normal,,,,,NO1+r8mQ8ECfRbH92kizeA,rFyMs5TwTmmCItNkbZjNag,,,N,0,0,,,2013-06-23 13:01,2013-06-23 13:01,admin,admin
1072,87037,1346,11572,1473,1,0,N,N,N,CP_Phys,TT_Task,DT_FixedDrtn,RV_OK,TK_NotStart,OCEC18441,Construction of Catch Pits and hook up,2981,789,0,250,0,2500,2500,250,0,0,0,,,,2013-11-02 16:00,2013-12-09 16:00,,2013-07-13 07:00,2013-08-18 17:00,2013-07-13 07:00,2013-08-18 17:00,2013-07-13 07:00,2013-08-18 17:00,,2013-11-02 16:00,2013-12-09 16:00,,PT_Normal,,,,,DiMu34AED0Ws1Z0/K0AKSA,fcXCq/LIQaChLRbVYFztEw,,,N,0,0,,,2013-06-23 13:01,2013-06-23 13:01,admin,admin
1073,87038,1346,11572,1473,1,0,N,N,N,CP_Phys,TT_Task,DT_FixedDrtn,RV_OK,TK_NotStart,OCEC18451,Inspection and Testing,2971,789,110,40,0,80,80,40,0,0,0,,,,2014-01-11 16:00,2014-01-15 16:00,,2013-09-21 07:00,2013-09-24 17:00,2013-09-21 07:00,2013-09-24 17:00,2013-09-21 07:00,2013-09-24 17:00,,2014-01-11 16:00,2014-01-15 16:00,,PT_Normal,,,,,/F6EepZACECpkrG28YhtcA,Fu+pwwhWRduR4uA0O/KsLg,,,N,0,0,,,2013-06-23 13:01,2013-06-23 13:01,admin,admin
1074,87039,1346,11572,1473,1,0,N,N,N,CP_Phys,TT_Task,DT_FixedDrtn,RV_OK,TK_NotStart,OCEC20061,Construction of Grate Opennings,2981,789,0,60,0,600,600,60,0,0,0,,,,2013-12-09 16:00,2013-12-17 16:00,,2013-08-19 07:00,2013-08-26 17:00,2013-08-19 07:00,2013-08-26 17:00,2013-08-19 07:00,2013-08-26 17:00,,2013-12-09 16:00,2013-12-17 16:00,,PT_Normal,,,,,8WzRLLtSBUOClRJEuwBiOw,9HE6hP9STBCo8hovf1Glfw,,,N,0,0,,,2013-06-23 13:01,2013-06-23 13:01,admin,admin
1075,87040,1346,11572,1473,1,0,N,N,N,CP_Phys,TT_Task,DT_FixedDrtn,RV_OK,TK_NotStart,OCEC20071,Pipe Culvert Construction,2969,789,0,100,0,700,700,100,0,0,0,,,,2013-10-19 16:00,2013-11-02 16:00,,2013-06-29 07:00,2013-07-10 17:00,2013-06-29 07:00,2013-07-10 17:00,2013-06-29 07:00,2013-07-10 17:00,,2013-10-19 16:00,2013-11-02 16:00,,PT_Normal,,,,,Cqb6bBCbx0i0w38Bw83OZQ,phsQBszeSTibE/z0qfDs2A,,,N,0,0,,,2013-06-23 13:01,2013-06-23 13:01,admin,admin
1076,87041,1346,11572,1473,1,0,N,N,N,CP_Phys,TT_Task,DT_FixedDrtn,RV_OK,TK_NotStart,OCEC20081,Installation of Grated Channels,2969,789,0,250,0,1250,1250,250,0,0,0,,,,2013-11-02 16:00,2013-12-09 16:00,,2013-07-13 07:00,2013-08-18 17:00,2013-07-13 07:00,2013-08-18 17:00,2013-07-13 07:00,2013-08-18 17:00,,2013-11-02 16:00,2013-12-09 16:00,,PT_Normal,,,,,FlAYaZ9MWkyqWrgNGLxwMA,q5w52SiCRSqfthOZihBQ4g,,,N,0,0,,,2013-06-23 13:01,2013-06-23 13:01,admin,admin
1077,87042,1346,11592,1473,1,0,N,N,N,CP_Phys,TT_Task,DT_FixedDrtn,RV_OK,TK_NotStart,OCEC19671,Trench excavation for low voltage cable,2971,679,0,120,0,480,480,120,240,0,240,,,,2013-10-05 16:00,2013-10-21 16:00,,2013-06-30 07:00,2013-07-15 17:00,2013-06-30 07:00,2013-07-15 17:00,2013-06-30 07:00,2013-07-15 17:00,,2013-10-05 16:00,2013-10-21 16:00,,PT_Normal,,,,,hSQJmHHR1UCkgc7MFJva3w,BsnqJp3NTZed/iIRSs5jrQ,,,N,0,0,,,2013-06-23 13:01,2013-06-23 13:01,admin,admin
1078,87043,1346,11592,1473,1,0,N,N,N,CP_Phys,TT_Task,DT_FixedDrtn,RV_OK,TK_NotStart,OCEC19871,Bed preparation,2984,679,0,120,0,480,480,120,240,0,240,,,,2013-10-13 16:00,2013-10-29 16:00,,2013-07-08 07:00,2013-07-23 17:00,2013-07-08 07:00,2013-07-23 17:00,2013-07-08 07:00,2013-07-23 17:00,,2013-10-13 16:00,2013-10-29 16:00,,PT_Normal,,,,,jAAmXuvNXkWNItXboHGVJA,9poZ/R2oSdmFK+PpFJtWpw,,,N,0,0,,,2013-06-23 13:01,2013-06-23 13:01,admin,admin
1079,87044,1346,11592,1473,1,0,N,N,N,CP_Phys,TT_Task,DT_FixedDrtn,RV_OK,TK_NotStart,OCEC19891,Low Voltage Cable laying,2971,679,0,120,0,480,480,120,240,0,240,,,,2013-11-06 16:00,2013-11-26 16:00,,2013-08-03 07:00,2013-08-20 17:00,2013-08-03 07:00,2013-08-20 17:00,2013-08-03 07:00,2013-08-20 17:00,,2013-11-06 16:00,2013-11-26 16:00,,PT_Normal,,,,,i2u5hjcpZ02EA6s7QsbhKg,jclpTYpISli3ZZ4NOvKKiA,,,N,0,0,,,2013-06-23 13:01,2013-06-23 13:01,admin,admin
1080,87045,1346,11592,1473,1,0,N,N,N,CP_Phys,TT_Task,DT_FixedDrtn,RV_OK,TK_NotStart,OCEC19901,Backfilling and compaction,3001,679,0,40,0,280,280,40,120,0,120,,,,2013-12-18 16:00,2013-12-24 16:00,,2013-09-14 07:00,2013-09-17 17:00,2013-09-14 07:00,2013-09-17 17:00,2013-09-14 07:00,2013-09-17 17:00,,2013-12-18 16:00,2013-12-24 16:00,,PT_Normal,,,,,s5/3RmdHRUi0uJ4ZHxRNSw,OHTQcBI7QCqD2V8uYIqveg,,,N,0,0,,,2013-06-23 13:01,2013-06-23 13:01,admin,admin
1081,87046,1346,11592,1473,1,0,N,N,N,CP_Phys,TT_Task,DT_FixedDrtn,RV_OK,TK_NotStart,OCEC19911,Marker post  and marker plates fixing,2981,719,40,120,0,360,360,120,0,0,0,,,,2013-12-30 16:00,2014-01-15 16:00,,2013-09-18 07:00,2013-10-05 17:00,2013-09-18 07:00,2013-10-05 17:00,2013-09-18 07:00,2013-10-05 17:00,,2013-12-30 16:00,2014-01-15 16:00,,PT_Normal,,,,,bOSI6fIu50eetTeOUeAwEQ,1vU8QTA8RNiWaSsw6V18og,,,N,0,0,,,2013-06-23 13:01,2013-06-23 13:01,admin,admin
1082,87047,1346,11592,1473,1,0,N,N,N,CP_Phys,TT_Task,DT_FixedDrtn,RV_OK,TK_NotStart,OCEC19921,Install AC pipe ducts,2980,679,0,120,0,720,720,120,120,0,120,,,,2013-10-21 16:00,2013-11-06 16:00,,2013-07-16 07:00,2013-07-31 17:00,2013-07-16 07:00,2013-07-31 17:00,2013-07-16 07:00,2013-07-31 17:00,,2013-10-21 16:00,2013-11-06 16:00,,PT_Normal,,,,,uN+ZkHPRuk6rKpl8HGkPRw,WM7pjz5uTH20Gq1ssVzYlw,,,N,0,0,,,2013-06-23 13:01,2013-06-23 13:01,admin,admin
1083,87048,1346,11592,1473,1,0,N,N,N,CP_Phys,TT_Task,DT_FixedDrtn,RV_OK,TK_NotStart,OCEC19931,Setting out and route survey,2983,679,0,40,0,80,80,40,40,0,40,,,,2013-09-29 16:00,2013-10-05 16:00,,2013-06-24 07:00,2013-06-29 17:00,2013-06-24 07:00,2013-06-29 17:00,2013-06-24 07:00,2013-06-29 17:00,,2013-09-29 16:00,2013-10-05 16:00,,PT_Normal,,,,,6oT+lqqbq0iBtdyOWCO2sw,TzII7cl8RpKI1kyaY9wIKQ,,,N,0,0,,,2013-06-23 13:01,2013-06-23 13:01,admin,admin
1084,87049,1346,11592,1473,1,0,N,N,N,CP_Phys,TT_Task,DT_FixedDrtn,RV_OK,TK_NotStart,OCEC20111,Cable termination,2990,679,0,100,0,400,400,100,200,0,200,,,,2013-11-26 16:00,2013-12-10 16:00,,2013-08-21 07:00,2013-09-03 17:00,2013-08-21 07:00,2013-09-03 17:00,2013-08-21 07:00,2013-09-03 17:00,,2013-11-26 16:00,2013-12-10 16:00,,PT_Normal,,,,,cgTJZ1eFP02Y7Q5w+PPPBg,Qk6b9dCKRZ6W+hFYjvsjMg,,,N,0,0,,,2013-06-23 13:01,2013-06-23 13:01,admin,admin
1085,87050,1346,11592,1473,1,0,N,N,N,CP_Phys,TT_Task,DT_FixedDrtn,RV_OK,TK_NotStart,OCEC20121,Inspection and Testing,2969,679,0,60,0,120,120,60,0,0,0,,,,2013-12-10 16:00,2013-12-18 16:00,,2013-09-04 07:00,2013-09-11 17:00,2013-09-04 07:00,2013-09-11 17:00,2013-09-04 07:00,2013-09-11 17:00,,2013-12-10 16:00,2013-12-18 16:00,,PT_Normal,,,,,VUczOpTszEGb/po9/xJqMA,2iLmBsQoQbKP95vfPgPmpQ,,,N,0,0,,,2013-06-23 13:01,2013-06-23 13:01,admin,admin
1086,87051,1346,11596,1473,1,0,N,N,N,CP_Phys,TT_Task,DT_FixedDrtn,RV_OK,TK_NotStart,OCEC11091,Trench excavation,2971,729,0,60,0,420,420,60,120,0,120,,,,2013-08-20 16:00,2013-08-28 16:00,,2013-05-08 07:00,2013-05-15 17:00,2013-05-08 07:00,2013-05-15 17:00,2013-05-08 07:00,2013-05-15 17:00,,2013-08-20 16:00,2013-08-28 16:00,,PT_Normal,,,,,UoRZ50HFCkWbGRTVH+QKaA,DuGcj4JFRaGslEss91k6WQ,,,N,0,0,,,2013-06-23 13:01,2013-06-23 13:01,admin,admin
1087,87052,1346,11596,1473,1,0,N,N,N,CP_Phys,TT_Task,DT_FixedDrtn,RV_OK,TK_NotStart,OCEC13071,Preparation of bed,2971,729,0,40,0,280,280,40,40,0,40,,,,2013-08-28 16:00,2013-09-03 16:00,,2013-05-18 07:00,2013-05-21 17:00,2013-05-18 07:00,2013-05-21 17:00,2013-05-18 07:00,2013-05-21 17:00,,2013-08-28 16:00,2013-09-03 16:00,,PT_Normal,,,,,eXfABHpqCEmaDNtGZaBE/w,hBeM7YEdTVGco22xiUyjMg,,,N,0,0,,,2013-06-23 13:01,2013-06-23 13:01,admin,admin
1088,87053,1346,11596,1473,1,0,N,N,N,CP_Phys,TT_Task,DT_FixedDrtn,RV_OK,TK_NotStart,OCEC18192,Construction of utilites crossing (Duct),2984,729,0,60,0,780,780,60,120,0,120,,,,2013-09-03 16:00,2013-09-11 16:00,,2013-05-22 07:00,2013-05-29 17:00,2013-05-22 07:00,2013-05-29 17:00,2013-05-22 07:00,2013-05-29 17:00,,2013-09-03 16:00,2013-09-11 16:00,,PT_Normal,,,,,R/Crp/KMP0+qecMjqDRC3w,wj+ly5zpRyCeWdYk/WDcMw,,,N,0,0,,,2013-06-23 13:01,2013-06-23 13:01,admin,admin
1089,87054,1346,11596,1473,1,0,N,N,N,CP_Phys,TT_Task,DT_FixedDrtn,RV_OK,TK_NotStart,OCEC18201,Backfilling and compaction,3001,729,50,120,0,1080,1080,120,360,0,360,,,,2013-09-11 16:00,2013-09-29 16:00,,2013-06-01 07:00,2013-06-16 17:00,2013-06-01 07:00,2013-06-16 17:00,2013-06-01 07:00,2013-06-16 17:00,,2013-09-11 16:00,2013-09-29 16:00,,PT_Normal,,,,,9BT08+heq0OQol+xBWfHVw,JnIEIie0Qy+g6zK7wQBLWg,,,N,0,0,,,2013-06-23 13:01,2013-06-23 13:01,admin,admin
1090,87055,1346,11596,1473,1,0,N,N,N,CP_Phys,TT_Task,DT_FixedDrtn,RV_OK,TK_NotStart,OCEC20101,Setting out and route survey,2983,799,70,40,0,80,80,40,40,0,40,,,,2013-08-14 16:00,2013-08-20 16:00,,2013-04-23 07:00,2013-04-28 17:00,2013-04-23 07:00,2013-04-28 17:00,2013-04-23 07:00,2013-04-28 17:00,,2013-08-14 16:00,2013-08-20 16:00,,PT_Normal,,,,,K3nmCkcWXk+1lwmEdKHjJw,lTk1tI8DTHWe0adLWSHCbg,,,N,0,0,,,2013-06-23 13:01,2013-06-23 13:01,admin,admin
1091,87056,1346,11596,1473,1,0,N,N,N,CP_Phys,TT_Task,DT_FixedDrtn,RV_OK,TK_NotStart,OCEC18193,Inspection and Testing,2969,1569,890,40,0,80,80,40,0,0,0,,,,2014-01-11 16:00,2014-01-15 16:00,,2013-06-01 07:00,2013-06-04 17:00,2013-06-01 07:00,2013-06-04 17:00,2013-06-01 07:00,2013-06-04 17:00,,2014-01-11 16:00,2014-01-15 16:00,,PT_Normal,,,,,5x/cEMzOwkuC8kkcgAHBIg,GcKVzsP8QS2eW4t85IcIDg,,,N,0,0,,,2013-06-23 13:01,2013-06-23 13:01,admin,admin
1092,87057,1346,11597,1473,1,0,N,N,N,CP_Phys,TT_Task,DT_FixedDrtn,RV_OK,TK_NotStart,OCEC20051,Completion of Works in Road no. 6,,679,670,8,0,7680,7680,8,0,0,0,,,,2014-01-15 08:00,2014-01-15 16:00,,2013-10-09 09:00,2013-10-09 17:00,2013-10-09 09:00,2013-10-09 17:00,2013-10-09 09:00,2013-10-09 17:00,,2014-01-15 08:00,2014-01-15 16:00,,PT_Normal,,,,,vmpPJlawCk6k7nNeLBmRMQ,sNNuQ4b8T4u2+sOUCgzxBA,,,N,0,0,,,2013-06-23 13:01,2013-06-23 13:01,admin,admin
1093,87058,1346,11576,1473,1,0,N,N,N,CP_Phys,TT_Task,DT_FixedDrtn,RV_OK,TK_NotStart,OCEC19941,Concrete base for Feeder Pillar and High mast,2971,689,0,30,0,300,300,30,0,0,0,,,,2014-01-07 16:00,2014-01-12 16:00,,2013-10-01 07:00,2013-10-05 17:00,2013-10-01 07:00,2013-10-05 17:00,2013-10-01 07:00,2013-10-05 17:00,,2014-01-07 16:00,2014-01-12 16:00,,PT_Normal,,,,,XgFTmrxukkKm+TgDg41mBw,4Z4SDfUOSme98lrKXXPAlA,,,N,0,0,,,2013-06-23 13:01,2013-06-23 13:01,admin,admin
1094,87059,1346,11576,1473,1,0,N,N,N,CP_Phys,TT_Task,DT_FixedDrtn,RV_OK,TK_NotStart,OCEC19951,Installation of Feed Pillar,2971,689,0,30,0,120,120,30,60,0,60,,,,2014-01-08 16:00,2014-01-13 16:00,,2013-10-02 07:00,2013-10-06 17:00,2013-10-02 07:00,2013-10-06 17:00,2013-10-02 07:00,2013-10-06 17:00,,2014-01-08 16:00,2014-01-13 16:00,,PT_Normal,,,,,19HDs74WZU6MYmTlR/+yug,LhdH2L/WQciUAxlud/dbZg,,,N,0,0,,,2013-06-23 13:01,2013-06-23 13:01,admin,admin
1095,87060,1346,11576,1473,1,0,N,N,N,CP_Phys,TT_Task,DT_FixedDrtn,RV_OK,TK_NotStart,OCEC19961,Installation of Ornamental Lighting Columns,2969,689,0,30,0,240,240,30,60,0,60,,,,2014-01-11 16:00,2014-01-14 16:00,,2013-10-05 07:00,2013-10-07 17:00,2013-10-05 07:00,2013-10-07 17:00,2013-10-05 07:00,2013-10-07 17:00,,2014-01-11 16:00,2014-01-14 16:00,,PT_Normal,,,,,Kavlxp6YfEanCp7SrgC4rQ,cRFOT3r2R46Sji5Paq89TA,,,N,0,0,,,2013-06-23 13:01,2013-06-23 13:01,admin,admin
1096,87061,1346,11576,1473,1,0,N,N,N,CP_Phys,TT_Task,DT_FixedDrtn,RV_OK,TK_NotStart,OCEC19971,Installation of High mast assembly,2971,699,10,30,0,150,150,30,60,0,60,,,,2014-01-11 16:00,2014-01-14 16:00,,2013-10-02 07:00,2013-10-06 17:00,2013-10-02 07:00,2013-10-06 17:00,2013-10-02 07:00,2013-10-06 17:00,,2014-01-11 16:00,2014-01-14 16:00,,PT_Normal,,,,,ESxuWG2A+kemI0DQIlD4Rw,zlhD3UlDROqTJBOHFF/6aA,,,N,0,0,,,2013-06-23 13:01,2013-06-23 13:01,admin,admin
1097,87062,1346,11576,1473,1,0,N,N,N,CP_Phys,TT_Task,DT_FixedDrtn,RV_OK,TK_NotStart,OCEC19981,Earthing for Feeder Pillar and the end of Street lighting circuit,2969,689,0,20,0,60,60,20,0,0,0,,,,2014-01-12 16:00,2014-01-14 16:00,,2013-10-06 07:00,2013-10-07 17:00,2013-10-06 07:00,2013-10-07 17:00,2013-10-06 07:00,2013-10-07 17:00,,2014-01-12 16:00,2014-01-14 16:00,,PT_Normal,,,,,FxIZqthdrkSBYyVD4cjoaQ,e+QkVZ/zS+WSuVdAbwzfvw,,,N,0,0,,,2013-06-23 13:01,2013-06-23 13:01,admin,admin
1098,87063,1346,11576,1473,1,0,N,N,N,CP_Phys,TT_Task,DT_FixedDrtn,RV_OK,TK_NotStart,OCEC19991,Power supply connections and Tests,2969,689,10,20,0,40,40,20,0,0,0,,,,2014-01-13 16:00,2014-01-15 16:00,,2013-10-07 07:00,2013-10-08 17:00,2013-10-07 07:00,2013-10-08 17:00,2013-10-07 07:00,2013-10-08 17:00,,2014-01-13 16:00,2014-01-15 16:00,,PT_Normal,,,,,hmst/Nrk3UKIYasvPFn1dw,sAM90ZJ/Q2ClbPj6zVLI2Q,,,N,0,0,,,2013-06-23 13:01,2013-06-23 13:01,admin,admin
1099,87064,1346,11576,1473,1,0,N,N,N,CP_Phys,TT_Task,DT_FixedDrtn,RV_OK,TK_NotStart,OCEC20191,Setting out and route survey,2983,689,0,40,0,80,80,40,40,0,40,,,,2013-12-30 16:00,2014-01-05 16:00,,2013-09-23 07:00,2013-09-28 17:00,2013-09-23 07:00,2013-09-28 17:00,2013-09-23 07:00,2013-09-28 17:00,,2013-12-30 16:00,2014-01-05 16:00,,PT_Normal,,,,,fsWz/0dhvEamWzpvHp/5xg,2R7DbFceQ16MEVacUp0elQ,,,N,0,0,,,2013-06-23 13:01,2013-06-23 13:01,admin,admin
1100,87065,1346,11576,1473,1,0,N,N,N,CP_Phys,TT_Task,DT_FixedDrtn,RV_OK,TK_NotStart,OCEC20201,Excavation Works,2971,689,0,20,0,100,100,20,20,0,20,,,,2014-01-05 16:00,2014-01-07 16:00,,2013-09-29 07:00,2013-09-30 17:00,2013-09-29 07:00,2013-09-30 17:00,2013-09-29 07:00,2013-09-30 17:00,,2014-01-05 16:00,2014-01-07 16:00,,PT_Normal,,,,,4Vv7nnwTDUe8roZ6+r2M4A,WG9lxrLUSOaZR/C8Vbx2BA,,,N,0,0,,,2013-06-23 13:01,2013-06-23 13:01,admin,admin
1101,87066,1346,11576,1473,1,0,N,N,N,CP_Phys,TT_Task,DT_FixedDrtn,RV_OK,TK_NotStart,OCEC20211,Inspection and Testing,2969,689,0,20,0,60,60,20,0,0,0,,,,2014-01-13 16:00,2014-01-15 16:00,,2013-10-07 07:00,2013-10-08 17:00,2013-10-07 07:00,2013-10-08 17:00,2013-10-07 07:00,2013-10-08 17:00,,2014-01-13 16:00,2014-01-15 16:00,,PT_Normal,,,,,35P9b6ltKUK1PBJs4wVPxg,bZThFwAeT+2MgwlJ/YyEXQ,,,N,0,0,,,2013-06-23 13:01,2013-06-23 13:01,admin,admin
1102,87067,1346,11577,1473,1,0,N,N,N,CP_Phys,TT_Task,DT_FixedDrtn,RV_OK,TK_NotStart,OCEC20031,Install W-Beam Guardrail transition Section and terminal end,2969,729,0,30,0,540,540,30,60,0,60,,,,2014-01-08 16:00,2014-01-13 16:00,,2013-09-28 07:00,2013-09-30 17:00,2013-09-28 07:00,2013-09-30 17:00,2013-09-28 07:00,2013-09-30 17:00,,2014-01-08 16:00,2014-01-13 16:00,,PT_Normal,,,,,1UvP/fqlSEClxQCu7F3XDA,p85HAQd9Q4OLzu2Jbxgp9A,,,N,0,0,,,2013-06-23 13:01,2013-06-23 13:01,admin,admin
1103,87068,1346,11577,1473,1,0,N,N,N,CP_Phys,TT_Task,DT_FixedDrtn,RV_OK,TK_NotStart,OCEC20221,Concrete Barrier Works,2969,729,0,40,0,720,720,40,80,0,80,,,,2014-01-11 16:00,2014-01-15 16:00,,2013-09-29 07:00,2013-10-02 17:00,2013-09-29 07:00,2013-10-02 17:00,2013-09-29 07:00,2013-10-02 17:00,,2014-01-11 16:00,2014-01-15 16:00,,PT_Normal,,,,,/Za5gAb8BE6NckEr/xjAZw,COFuSnFAQF+x0FoCAG1nSQ,,,N,0,0,,,2013-06-23 13:01,2013-06-23 13:01,admin,admin
1104,87069,1346,11577,1473,1,0,N,N,N,CP_Phys,TT_Task,DT_FixedDrtn,RV_OK,TK_NotStart,OCEC20231,Chain Link Fence to Master Plan Boundary,,729,50,80,0,0,0,80,0,0,0,,,,2014-01-05 16:00,2014-01-15 16:00,,2013-09-23 07:00,2013-10-02 17:00,2013-09-23 07:00,2013-10-02 17:00,2013-09-23 07:00,2013-10-02 17:00,,2014-01-05 16:00,2014-01-15 16:00,,PT_Normal,,,,,VlKw5UecIEygJ36tFtIIvQ,0YfwAxHEQnGTloMUq+CnXA,,,N,0,0,,,2013-06-23 13:01,2013-06-23 13:01,admin,admin
1105,87070,1346,11577,1473,1,0,N,N,N,CP_Phys,TT_Task,DT_FixedDrtn,RV_OK,TK_NotStart,OCEC20241,Setting out and Survey Works,2983,729,0,30,0,60,60,30,30,0,30,,,,2014-01-05 16:00,2014-01-08 16:00,,2013-09-23 07:00,2013-09-25 17:00,2013-09-23 07:00,2013-09-25 17:00,2013-09-23 07:00,2013-09-25 17:00,,2014-01-05 16:00,2014-01-08 16:00,,PT_Normal,,,,,xNF3w7uonEOS/M4JffS9iw,NcDTDiHETsasmeZtqkrk7g,,,N,0,0,,,2013-06-23 13:01,2013-06-23 13:01,admin,admin
1106,87071,1346,11540,1473,1,100,N,N,N,CP_Phys,TT_Task,DT_FixedDrtn,RV_OK,TK_Complete,OCEC10581,Survey works and setting out,,,,0,0,0,0,56,0,0,0,,2013-01-16 16:00,2013-01-26 12:00,2013-08-18 16:00,2013-08-18 16:00,,2013-04-23 00:00,2013-04-23 00:00,,,2013-01-16 16:00,2013-01-26 12:00,,,,,PT_Normal,,,,,wgaD/D1x1UaHnSyXp28A6g,JNqOIxbrSViQhedo/k4AaA,,,N,0,0,,,2013-06-23 13:01,2013-06-23 13:01,admin,admin
1107,87072,1346,11615,1473,1,0,N,N,N,CP_Phys,TT_Task,DT_FixedDrtn,RV_OK,TK_NotStart,OCEC11931,Trench excavation for low voltage cable,2971,659,0,120,0,240,240,120,120,0,120,,,,2013-10-01 16:00,2013-10-19 16:00,,2013-06-30 07:00,2013-07-15 17:00,2013-06-30 07:00,2013-07-15 17:00,2013-06-30 07:00,2013-07-15 17:00,,2013-10-01 16:00,2013-10-19 16:00,,PT_Normal,,,,,mzciUZfjAkGS3O7yMc71WQ,0AXREsIwRCqbqw0xbXU43Q,,,N,0,0,,,2013-06-23 13:01,2013-06-23 13:01,admin,admin
1108,87073,1346,11615,1473,1,0,N,N,N,CP_Phys,TT_Task,DT_FixedDrtn,RV_OK,TK_NotStart,OCEC11941,Bed preparation,2984,659,110,160,0,320,320,160,160,0,160,,,,2013-10-09 16:00,2013-11-02 16:00,,2013-07-08 07:00,2013-07-29 17:00,2013-07-08 07:00,2013-07-29 17:00,2013-07-08 07:00,2013-07-29 17:00,,2013-10-09 16:00,2013-11-02 16:00,,PT_Normal,,,,,kNp4DpB3z02lIW4eRFyuGw,LRFjfMklRACcFyNjj6esnw,,,N,0,0,,,2013-06-23 13:01,2013-06-23 13:01,admin,admin
1109,87074,1346,11615,1473,1,0,N,N,N,CP_Phys,TT_Task,DT_FixedDrtn,RV_OK,TK_NotStart,OCEC11951,Low Voltage Cable laying,2971,549,0,120,0,360,360,120,240,0,240,,,,2013-11-04 16:00,2013-11-24 16:00,,2013-08-20 07:00,2013-09-04 17:00,2013-08-20 07:00,2013-09-04 17:00,2013-08-20 07:00,2013-09-04 17:00,,2013-11-04 16:00,2013-11-24 16:00,,PT_Normal,,,,,nRqBYLDBM068gqMb3jaVFA,GnsLd0IPQtm+juiGCHInWA,,,N,0,0,,,2013-06-23 13:01,2013-06-23 13:01,admin,admin
1110,87075,1346,11615,1473,1,0,N,N,N,CP_Phys,TT_Task,DT_FixedDrtn,RV_OK,TK_NotStart,OCEC11961,Backfilling and compaction,2984,549,0,100,0,600,600,100,300,0,300,,,,2013-12-16 16:00,2013-12-30 16:00,,2013-09-29 07:00,2013-10-12 17:00,2013-09-29 07:00,2013-10-12 17:00,2013-09-29 07:00,2013-10-12 17:00,,2013-12-16 16:00,2013-12-30 16:00,,PT_Normal,,,,,qO1gAaNXXUaR8XcHfjd5DQ,lVNEGSMgRPmXZ/JfYUiKIw,,,N,0,0,,,2013-06-23 13:01,2013-06-23 13:01,admin,admin
1111,87076,1346,11615,1473,1,0,N,N,N,CP_Phys,TT_Task,DT_FixedDrtn,RV_OK,TK_NotStart,OCEC11971,Marker post  and marker plates fixing,2971,549,540,120,0,360,360,120,0,0,0,,,,2013-12-30 16:00,2014-01-15 16:00,,2013-10-13 07:00,2013-10-28 17:00,2013-10-13 07:00,2013-10-28 17:00,2013-10-13 07:00,2013-10-28 17:00,,2013-12-30 16:00,2014-01-15 16:00,,PT_Normal,,,,,M425xnmG60mMLU3B5fmm9A,zJGySFZ3SQiHbA0ktQpSUw,,,N,0,0,,,2013-06-23 13:01,2013-06-23 13:01,admin,admin
1112,87077,1346,11615,1473,1,0,N,N,N,CP_Phys,TT_Task,DT_FixedDrtn,RV_OK,TK_NotStart,OCEC11981,Install AC pipe ducts,2980,549,0,120,0,600,600,120,120,0,120,,,,2013-10-19 16:00,2013-11-04 16:00,,2013-07-31 07:00,2013-08-19 17:00,2013-07-31 07:00,2013-08-19 17:00,2013-07-31 07:00,2013-08-19 17:00,,2013-10-19 16:00,2013-11-04 16:00,,PT_Normal,,,,,Ws0TQGdGf0uJYv6Q5dLs8A,/tBgzn1NRe2Jp/NVZVStAg,,,N,0,0,,,2013-06-23 13:01,2013-06-23 13:01,admin,admin
1113,87078,1346,11615,1473,1,0,N,N,N,CP_Phys,TT_Task,DT_FixedDrtn,RV_OK,TK_NotStart,OCEC13091,Setting out and route survey,2971,659,0,40,0,80,80,40,40,0,40,,,,2013-09-25 16:00,2013-10-01 16:00,,2013-06-24 07:00,2013-06-29 17:00,2013-06-24 07:00,2013-06-29 17:00,2013-06-24 07:00,2013-06-29 17:00,,2013-09-25 16:00,2013-10-01 16:00,,PT_Normal,,,,,Ux4FI3OzdkiBuVT+d/oolw,Z9TbPHYESKu0+ziBDwvJOQ,,,N,0,0,,,2013-06-23 13:01,2013-06-23 13:01,admin,admin
1114,87079,1346,11615,1473,1,0,N,N,N,CP_Phys,TT_Task,DT_FixedDrtn,RV_OK,TK_NotStart,OCEC18711,Cable termination,2971,549,0,100,0,400,400,100,200,0,200,,,,2013-11-24 16:00,2013-12-08 16:00,,2013-09-07 07:00,2013-09-18 17:00,2013-09-07 07:00,2013-09-18 17:00,2013-09-07 07:00,2013-09-18 17:00,,2013-11-24 16:00,2013-12-08 16:00,,PT_Normal,,,,,kA7vErT/TUyZF8lzFDllqg,7rPLBH94R8GN2zKH5RtSOQ,,,N,0,0,,,2013-06-23 13:01,2013-06-23 13:01,admin,admin
1115,87080,1346,11615,1473,1,0,N,N,N,CP_Phys,TT_Task,DT_FixedDrtn,RV_OK,TK_NotStart,OCEC18721,Inspection and Testing,2971,549,0,60,0,120,120,60,0,0,0,,,,2013-12-08 16:00,2013-12-16 16:00,,2013-09-21 07:00,2013-09-28 17:00,2013-09-21 07:00,2013-09-28 17:00,2013-09-21 07:00,2013-09-28 17:00,,2013-12-08 16:00,2013-12-16 16:00,,PT_Normal,,,,,1KlTm9stSECkfGhPbUMvzA,yYWwUAvNQC+1bYFbKbDIBw,,,N,0,0,,,2013-06-23 13:01,2013-06-23 13:01,admin,admin
1116,87081,1346,11580,1473,1,0,N,N,N,CP_Phys,TT_Task,DT_FixedDrtn,RV_OK,TK_NotStart,OCEC11991,Concrete base for Feeder Pillar and High mast,2971,949,0,120,0,480,480,120,0,0,0,,,,2013-11-27 16:00,2013-12-15 16:00,,2013-07-14 07:00,2013-07-29 17:00,2013-07-14 07:00,2013-07-29 17:00,2013-07-14 07:00,2013-07-29 17:00,,2013-11-27 16:00,2013-12-15 16:00,,PT_Normal,,,,,/g58eJOvi0yZmDFLkbX9Jg,cmMYNUF4ROymb4ik6o9+yw,,,N,0,0,,,2013-06-23 13:01,2013-06-23 13:01,admin,admin
1117,87082,1346,11580,1473,1,0,N,N,N,CP_Phys,TT_Task,DT_FixedDrtn,RV_OK,TK_NotStart,OCEC12001,Installation of Feed Pillar,2971,969,0,80,0,320,320,80,160,0,160,,,,2013-12-07 16:00,2013-12-17 16:00,,2013-07-20 07:00,2013-07-29 17:00,2013-07-20 07:00,2013-07-29 17:00,2013-07-20 07:00,2013-07-29 17:00,,2013-12-07 16:00,2013-12-17 16:00,,PT_Normal,,,,,AoRjkm/lqUWO0Yb6aqT3rQ,Ghq0yMudTOy7vIi1Y+87ug,,,N,0,0,,,2013-06-23 13:01,2013-06-23 13:01,admin,admin
1118,87083,1346,11580,1473,1,0,N,N,N,CP_Phys,TT_Task,DT_FixedDrtn,RV_OK,TK_NotStart,OCEC12011,Installation of Ornamental Lighting Columns,2971,969,20,60,0,720,720,60,120,0,120,,,,2013-12-10 16:00,2013-12-18 16:00,,2013-07-23 07:00,2013-07-30 17:00,2013-07-23 07:00,2013-07-30 17:00,2013-07-23 07:00,2013-07-30 17:00,,2013-12-10 16:00,2013-12-18 16:00,,PT_Normal,,,,,ow8mO7lLc0+BUYqnMzQ7JQ,6SlMYcGrRoeHFcwvt5Hmmw,,,N,0,0,,,2013-06-23 13:01,2013-06-23 13:01,admin,admin
1119,87084,1346,11580,1473,1,0,N,N,N,CP_Phys,TT_Task,DT_FixedDrtn,RV_OK,TK_NotStart,OCEC12021,Installation of High mast assembly,2971,949,0,100,0,500,500,100,200,0,200,,,,2013-12-04 16:00,2013-12-18 16:00,,2013-07-21 07:00,2013-08-03 17:00,2013-07-21 07:00,2013-08-03 17:00,2013-07-21 07:00,2013-08-03 17:00,,2013-12-04 16:00,2013-12-18 16:00,,PT_Normal,,,,,liP85eXPykugvmrhfYNQWA,v+UFEWVfRvy5y/tG62iuww,,,N,0,0,,,2013-06-23 13:01,2013-06-23 13:01,admin,admin
1120,87085,1346,11580,1473,1,0,N,N,N,CP_Phys,TT_Task,DT_FixedDrtn,RV_OK,TK_NotStart,OCEC12031,Earthing for Feeder Pillar and the end of Street lighting circuit,2971,949,0,100,0,300,300,100,0,0,0,,,,2013-12-18 16:00,2014-01-01 16:00,,2013-08-04 07:00,2013-08-19 17:00,2013-08-04 07:00,2013-08-19 17:00,2013-08-04 07:00,2013-08-19 17:00,,2013-12-18 16:00,2014-01-01 16:00,,PT_Normal,,,,,D58uVejxDEOQHFPcI7Hx7w,9G1eZCZMQ8mO4V2mRUKZcw,,,N,0,0,,,2013-06-23 13:01,2013-06-23 13:01,admin,admin
1121,87086,1346,11580,1473,1,0,N,N,N,CP_Phys,TT_Task,DT_FixedDrtn,RV_OK,TK_NotStart,OCEC12041,Power supply connections and Tests,2971,949,940,60,0,420,420,60,0,0,0,,,,2014-01-07 16:00,2014-01-15 16:00,,2013-08-26 07:00,2013-09-02 17:00,2013-08-26 07:00,2013-09-02 17:00,2013-08-26 07:00,2013-09-02 17:00,,2014-01-07 16:00,2014-01-15 16:00,,PT_Normal,,,,,j8YwfRcZF06F89w1I897iw,o2C+ao/ARq2nzKo0DxXCVw,,,N,0,0,,,2013-06-23 13:01,2013-06-23 13:01,admin,admin
1122,87087,1346,11580,1473,1,0,N,N,N,CP_Phys,TT_Task,DT_FixedDrtn,RV_OK,TK_NotStart,OCEC18781,Setting out and route survey,2971,969,0,40,0,80,80,40,40,0,40,,,,2013-11-13 16:00,2013-11-23 16:00,,2013-06-30 07:00,2013-07-03 17:00,2013-06-30 07:00,2013-07-03 17:00,2013-06-30 07:00,2013-07-03 17:00,,2013-11-13 16:00,2013-11-23 16:00,,PT_Normal,,,,,xn7vgGU9AU6TaPS1eKWpLQ,x4X7PimWSAyxyOlnqeGLpQ,,,N,0,0,,,2013-06-23 13:01,2013-06-23 13:01,admin,admin
1123,87088,1346,11580,1473,1,0,N,N,N,CP_Phys,TT_Task,DT_FixedDrtn,RV_OK,TK_NotStart,OCEC18791,Excavation Works,2971,949,0,40,0,120,120,40,40,0,40,,,,2013-11-23 16:00,2013-11-27 16:00,,2013-07-08 07:00,2013-07-13 17:00,2013-07-08 07:00,2013-07-13 17:00,2013-07-08 07:00,2013-07-13 17:00,,2013-11-23 16:00,2013-11-27 16:00,,PT_Normal,,,,,ZpCm0Ua2jk+/xSewITYVHA,pOHfN8rWTlaoNoX0mbQiYw,,,N,0,0,,,2013-06-23 13:01,2013-06-23 13:01,admin,admin
1124,87089,1346,11580,1473,1,0,N,N,N,CP_Phys,TT_Task,DT_FixedDrtn,RV_OK,TK_NotStart,OCEC18801,Inspection and Testing,2971,949,0,40,0,120,120,40,0,0,0,,,,2014-01-01 16:00,2014-01-07 16:00,,2013-08-20 07:00,2013-08-25 17:00,2013-08-20 07:00,2013-08-25 17:00,2013-08-20 07:00,2013-08-25 17:00,,2014-01-01 16:00,2014-01-07 16:00,,PT_Normal,,,,,DBWbNhXfxkOoNb0LXFWMCw,Z7Xwox6XRZmpXafnWQkIyw,,,N,0,0,,,2013-06-23 13:01,2013-06-23 13:01,admin,admin
1125,87090,1346,11581,1473,1,0,N,N,N,CP_Phys,TT_Task,DT_FixedDrtn,RV_OK,TK_NotStart,B1963,Approval of Backfill Material for MSE Wall,,728,0,220,0,0,0,220,0,0,0,,,,2013-12-08 16:00,2014-01-07 16:00,,2013-08-26 08:00,2013-09-25 08:00,2013-08-26 08:00,2013-09-25 08:00,2013-08-26 08:00,2013-09-25 08:00,,2013-12-08 16:00,2014-01-07 16:00,,PT_Normal,,,,,wjQpBa2IAEafeia8gd7T2A,xKe8/d1IBE6aQ46uNfcz0g,,,N,0,0,,,2013-06-23 13:01,2013-06-23 13:01,admin,admin
1126,87091,1346,11581,1474,1,0,N,N,N,CP_Phys,TT_Task,DT_FixedDrtn,RV_OK,TK_NotStart,B1971,Procurment  of Backfill Material for MSE Wall,,1048,1048,80,0,0,0,80,0,0,0,,,,2014-01-07 16:00,2014-01-15 16:00,,2013-09-25 08:00,2013-10-03 08:00,2013-09-25 08:00,2013-10-03 08:00,2013-09-25 08:00,2013-10-03 08:00,,2014-01-07 16:00,2014-01-15 16:00,,PT_Normal,,,,,zex3l1xa1U2mGGZsk4BTnQ,h2Yz2Q3TdEaKbZgGOpMB2A,,,N,0,0,,,2013-06-23 13:01,2013-06-23 13:01,admin,admin
1127,87092,1346,11581,1473,1,0,N,N,N,CP_Phys,TT_Task,DT_FixedDrtn,RV_OK,TK_NotStart,B2055,Approval of MSE wall materials & Accessories for approval,,73,0,220,0,0,0,220,0,0,0,,,,2013-06-17 10:00,2013-07-17 10:00,,2013-06-08 07:00,2013-07-07 17:00,2013-06-08 07:00,2013-07-07 17:00,2013-06-08 07:00,2013-07-07 17:00,,2013-06-17 10:00,2013-07-17 10:00,,PT_Normal,,,,,EqqCilTcCU2hC3D5ozxflw,HIoCCUoblkqwFU2LdKFkeg,,,N,0,0,,,2013-06-23 13:01,2013-06-23 13:01,admin,admin
1128,87093,1346,11581,1474,1,0,N,N,N,CP_Phys,TT_Task,DT_FixedDrtn,RV_OK,TK_NotStart,B2061,Procurment  MSE wall materials & Accessories,,93,84,620,0,0,0,620,0,0,0,,,,2013-07-30 10:00,2013-09-30 10:00,,2013-07-21 07:00,2013-09-20 17:00,2013-07-21 07:00,2013-09-20 17:00,2013-07-21 07:00,2013-09-20 17:00,,2013-07-30 10:00,2013-09-30 10:00,,PT_Normal,,,,,JvX8zFEo4k2f7xZZQFX9KQ,2WFY14klek+ien6D8F5Eaw,,,N,0,0,,,2013-06-23 13:01,2013-06-23 13:01,admin,admin
1129,87094,1346,11581,1473,1,0,N,N,N,CP_Phys,TT_Task,DT_FixedDrtn,RV_OK,TK_NotStart,A15120,Prepare & Submission of MSE Wall Design & Drawings,,9,0,40,0,0,0,40,0,0,0,,,,2013-08-17 07:00,2013-08-20 17:00,,2013-08-14 08:00,2013-08-20 08:00,2013-08-14 08:00,2013-08-20 08:00,2013-08-14 08:00,2013-08-20 08:00,,2013-08-17 07:00,2013-08-20 17:00,,PT_Normal,,,,,H1Hguu0ePkaW2BBwOSQSdA,gwzZHZhgyEmh7tTJc3S+EQ,,,N,0,0,,,2013-06-23 13:01,2013-06-23 13:01,admin,admin
1130,87095,1346,11581,1473,1,0,N,N,N,CP_Phys,TT_Task,DT_FixedDrtn,RV_OK,TK_NotStart,A15121,Approval of MSE Wall Design & Drawings,,9,0,140,0,0,0,140,0,0,0,,,,2013-08-21 07:00,2013-09-09 17:00,,2013-08-20 08:00,2013-09-09 08:00,2013-08-20 08:00,2013-09-09 08:00,2013-08-20 08:00,2013-09-09 08:00,,2013-08-21 07:00,2013-09-09 17:00,,PT_Normal,,,,,u0RrVt3Zb0m1nRkPNiLw1Q,U23x9yMZq0e2QzIMEWVhpQ,,,N,0,0,,,2013-06-23 13:01,2013-06-23 13:01,admin,admin
1131,87096,1346,11581,1473,1,0,N,N,N,CP_Phys,TT_Task,DT_FixedDrtn,RV_OK,TK_NotStart,A15122,Precasting of MSE Wall Pannels,2980,152,143,540,0,11340,11340,540,2700,0,2700,,,,2013-09-30 10:00,2013-12-17 10:00,,2013-09-09 08:00,2013-11-26 08:00,2013-09-09 08:00,2013-11-26 08:00,2013-09-09 08:00,2013-11-26 08:00,,2013-09-30 10:00,2013-12-17 10:00,,PT_Normal,,,,,b6U+8k3R2ky15c+uzqJYvA,MsNb5H/Vsk+weR1dqycqCw,,,N,0,0,,,2013-06-23 13:01,2013-06-23 13:01,admin,admin
1132,87097,1346,11581,1473,1,0,N,N,N,CP_Phys,TT_Task,DT_FixedDrtn,RV_OK,TK_NotStart,A15125,Bed Prepration for MSE Wall Foundations,2971,9,0,90,0,405,405,90,90,0,90,,,,2013-09-21 13:00,2013-10-02 13:00,,2013-09-18 14:00,2013-10-01 14:00,2013-09-18 14:00,2013-10-01 14:00,2013-09-18 14:00,2013-10-01 14:00,,2013-09-21 13:00,2013-10-02 13:00,,PT_Normal,,,,,yFo/DfWVtU2vz3x3tDIXpQ,ZiieLrYBZke82xfyzqrSFg,,,N,0,0,,,2013-06-23 13:01,2013-06-23 13:01,admin,admin
1133,87098,1346,11581,1473,1,0,N,N,N,CP_Phys,TT_Task,DT_FixedDrtn,RV_OK,TK_NotStart,A15127,Construction of MSE Wall,2969,9,0,540,0,9107.999996,9107.999996,540,3924.000002,0,3924.000002,,,,2013-09-30 10:00,2013-12-17 10:00,,2013-09-29 11:00,2013-12-16 11:00,2013-09-29 11:00,2013-12-16 11:00,2013-09-29 11:00,2013-12-16 11:00,,2013-09-30 10:00,2013-12-17 10:00,,PT_Normal,,,,,g4zfcDabr0SRk/0FX9Fllg,Hg1iq6shiE+eUfh5yBMKHQ,,,N,0,0,,,2013-06-23 13:01,2013-06-23 13:01,admin,admin
1134,87099,1346,11581,1473,1,0,N,N,N,CP_Phys,TT_Task,DT_FixedDrtn,RV_OK,TK_NotStart,A15123,Setting Out for MSE Wall Foundations,2971,9,0,36,0,116,116,36,36,0,36,,,,2013-09-10 07:00,2013-09-15 13:00,,2013-09-09 08:00,2013-09-14 14:00,2013-09-09 08:00,2013-09-14 14:00,2013-09-09 08:00,2013-09-14 14:00,,2013-09-10 07:00,2013-09-15 13:00,,PT_Normal,,,,,6fqu/0TycUCo//YFE8Us9w,MeaZ51a1d0eDSB/UsfPIMw,,,N,0,0,,,2013-06-23 13:01,2013-06-23 13:01,admin,admin
1135,87100,1346,11581,1473,1,0,N,N,N,CP_Phys,TT_Task,DT_FixedDrtn,RV_OK,TK_NotStart,A15124,Structural Excavation for MSE Wall Foundation,2984,9,0,40,0,220,220,40,80,0,80,,,,2013-09-15 13:00,2013-09-21 13:00,,2013-09-14 14:00,2013-09-18 14:00,2013-09-14 14:00,2013-09-18 14:00,2013-09-14 14:00,2013-09-18 14:00,,2013-09-15 13:00,2013-09-21 13:00,,PT_Normal,,,,,Un9K9D/wvUG1fPBJPtuLuQ,PaUsPDaoAEOsw0VZpk1Q4A,,,N,0,0,,,2013-06-23 13:01,2013-06-23 13:01,admin,admin
1136,87101,1346,11581,1473,1,0,N,N,N,CP_Phys,TT_Task,DT_FixedDrtn,RV_OK,TK_NotStart,A15126,Construction of MSE Wall Foundations,2971,9,0,80,0,3020,3020,80,800,0,800,,,,2013-09-25 13:00,2013-10-07 13:00,,2013-09-24 14:00,2013-10-06 14:00,2013-09-24 14:00,2013-10-06 14:00,2013-09-24 14:00,2013-10-06 14:00,,2013-09-25 13:00,2013-10-07 13:00,,PT_Normal,,,,,24FrXb4390uwKIqdQXE/DQ,xdZAZbVsGkqlg0flfPurrQ,,,N,0,0,,,2013-06-23 13:01,2013-06-23 13:01,admin,admin
1137,87102,1346,11581,1473,1,0,N,N,N,CP_Phys,TT_Task,DT_FixedDrtn,RV_OK,TK_NotStart,A15128,Standard Coping & Parapet Construction for MSE Wall,2970,9,0,90,0,1310.625,1310.625,90,236.25,0,236.25,,,,2013-12-17 10:00,2013-12-30 10:00,,2013-12-16 11:00,2013-12-29 11:00,2013-12-16 11:00,2013-12-29 11:00,2013-12-16 11:00,2013-12-29 11:00,,2013-12-17 10:00,2013-12-30 10:00,,PT_Normal,,,,,X1nKAVIyGEKGZwm6pmRmhA,APtmH9D7R0aeRzsAPv74Qw,,,N,0,0,,,2013-06-23 13:01,2013-06-23 13:01,admin,admin
1138,87103,1346,11581,1473,0,0,N,N,N,CP_Phys,TT_FinMile,DT_FixedDrtn,RV_OK,TK_NotStart,A15129,Completion of MSE Wall Constructions,,9,0,0,0,0,0,0,0,0,0,,,,2013-12-30 10:00,2013-12-30 10:00,,2013-12-29 11:00,2013-12-29 11:00,2013-12-29 11:00,2013-12-29 11:00,2013-12-29 11:00,2013-12-29 11:00,,2013-12-30 10:00,2013-12-30 10:00,,PT_Normal,,,,,21tCEOqfvEabGx20nPDMpA,AQWfPOqk8kKfoZP+KlyB7g,,,N,0,0,,,2013-06-23 13:01,2013-06-23 13:01,admin,admin
1139,87104,1346,11581,1473,1,0,N,N,N,CP_Phys,TT_Task,DT_FixedDrtn,RV_OK,TK_NotStart,B1962,Prepartion & Submission for Backfill Material for Approval,,728,0,80,0,0,0,80,0,0,0,,,,2013-11-26 16:00,2013-12-08 16:00,,2013-08-14 08:00,2013-08-26 08:00,2013-08-14 08:00,2013-08-26 08:00,2013-08-14 08:00,2013-08-26 08:00,,2013-11-26 16:00,2013-12-08 16:00,,PT_Normal,,,,,/uPqa+cVQEa//ntZa9Vtfg,Tmi+yJ/qHkSFh66ibQA7Yg,,,N,0,0,,,2013-06-23 13:01,2013-06-23 13:01,admin,admin
1140,87105,1346,11581,1473,1,0,N,N,N,CP_Phys,TT_Task,DT_FixedDrtn,RV_OK,TK_NotStart,B2054,Prepartion & Submission of MSE wall materials & Accessories for approval,,73,0,230,0,0,0,230,0,0,0,,,,2013-05-15 10:00,2013-06-17 10:00,,2013-05-06 07:00,2013-06-05 17:00,2013-05-06 07:00,2013-06-05 17:00,2013-05-06 07:00,2013-06-05 17:00,,2013-05-15 10:00,2013-06-17 10:00,,PT_Normal,,,,,4djgd7G7M0q5OwsKkRM2dQ,hu72Mu/WGkeQOBr7W6F1xQ,,,N,0,0,,,2013-06-23 13:01,2013-06-23 13:01,admin,admin
1141,87106,1346,11581,1473,1,0,N,N,N,CP_Drtn,TT_Task,DT_FixedDUR2,RV_OK,TK_NotStart,B2057,Soil Investigation,,9,0,216,0,0,0,216,0,0,0,,,,2013-07-14 11:00,2013-08-14 17:00,,2013-07-13 12:00,2013-08-14 08:00,2013-07-13 12:00,2013-08-14 08:00,2013-07-13 12:00,2013-08-14 08:00,,2013-07-14 11:00,2013-08-14 17:00,,PT_Normal,,,,,VOayRckTL0y7t5EUn0bP1Q,VDMItGb9fkes976BGAgXFg,,,N,0,0,,,2013-06-23 13:01,2013-06-23 13:01,admin,admin
1142,87107,1346,11581,1473,1,0,N,N,N,CP_Drtn,TT_Task,DT_FixedDUR2,RV_OK,TK_NotStart,B2056,Deployment of MSE Wall materials supplier & design subcontractor,,73,0,90,0,0,0,90,0,0,0,,,,2013-07-17 10:00,2013-07-30 10:00,,2013-07-08 07:00,2013-07-20 17:00,2013-07-08 07:00,2013-07-20 17:00,2013-07-08 07:00,2013-07-20 17:00,,2013-07-17 10:00,2013-07-30 10:00,,PT_Normal,,,,,CQOFhRV/eEeN860F33E7YA,sv4Kqfw5Ak2OeUumci932Q,,,N,0,0,,,2013-06-23 13:01,2013-06-23 13:01,admin,admin
1143,87108,1346,11581,1473,1,0,N,N,N,CP_Drtn,TT_Task,DT_FixedDUR2,RV_OK,TK_NotStart,A15136,"Drainage Works, Earthworks, Aphalt, Road Lighting  & Finishing Works",,9,0,126,0,0,0,126,0,0,0,,,,2013-12-30 10:00,2014-01-15 16:00,,2013-12-29 11:00,2014-01-14 17:00,2013-12-29 11:00,2014-01-14 17:00,2013-12-29 11:00,2014-01-14 17:00,,2013-12-30 10:00,2014-01-15 16:00,,PT_Normal,,,,,d0FyPSfceUq2jq5Rwkvspw,,,,N,0,0,,,2013-06-23 13:01,2013-06-23 13:01,admin,admin
1144,87109,1346,11729,1473,1,70,N,N,N,CP_Phys,TT_Task,DT_FixedDrtn,RV_OK,TK_Active,OCEC11731,Shopdrawings Layout and Cross Sections for Roads no. 7,,819,0,0,0,0,0,140,0,0,0,,2013-02-06 16:00,,2013-08-18 16:00,2013-08-18 16:00,,2013-04-23 07:00,2013-04-23 07:00,2013-04-23 07:00,2013-04-23 07:00,2013-02-06 16:00,2013-02-26 16:00,,2013-08-18 16:00,2013-08-18 16:00,,PT_Normal,,,,,m/M44YTPgEukAn8aAtimXg,SRutWiCFSWyHgGOt6Vuduw,,,N,0,0,,,2013-06-23 13:01,2013-06-23 13:01,admin,admin
1145,87110,1346,11730,1473,1,100,N,N,N,CP_Phys,TT_Task,DT_FixedDrtn,RV_OK,TK_Complete,OCEC11721,Shopdrawings Layout and Cross Sections for Roads no. 7,,,,0,0,0,0,150,0,0,0,,2013-01-16 16:00,2013-02-06 16:00,2013-08-18 16:00,2013-08-18 16:00,,2013-04-23 00:00,2013-04-23 00:00,,,2013-01-16 16:00,2013-02-06 16:00,,,,,PT_Normal,,,,,d+66b13n5EuXYRX5NoEW9Q,OqFaZ4p4R2e7kcTJJYWu6w,,,N,0,0,,,2013-06-23 13:01,2013-06-23 13:01,admin,admin
1146,87111,1346,11586,1473,1,100,N,N,N,CP_Phys,TT_Task,DT_FixedDrtn,RV_OK,TK_Complete,OCEC11781,Setting out and route survey,2983,,,0,80,0,80,40,40,40,0,,2013-02-17 00:00,2013-02-20 00:00,2013-09-25 16:00,2013-09-25 16:00,,2013-06-23 17:00,2013-06-23 17:00,,,2013-05-26 16:00,2013-06-01 16:00,,,,,PT_Normal,,,,,XaIg4FQhVUuNAAd6ZgsShw,/tR/4+YlS9ek//mzPM0c+w,,,N,80,40,,,2013-06-23 13:01,2013-06-23 13:01,admin,admin
1147,87112,1346,11586,1473,1,50,N,N,N,CP_Phys,TT_Task,DT_FixedDrtn,RV_OK,TK_Active,OCEC11791,Trench excavation,2971,689,0,120,0,360,360,120,120,0,120,,2013-02-23 00:00,,2013-09-30 16:00,2013-10-16 16:00,,2013-06-24 07:00,2013-07-09 17:00,2013-06-24 07:00,2013-07-09 17:00,2013-06-01 16:00,2013-06-17 16:00,,2013-09-30 16:00,2013-10-16 16:00,,PT_Normal,,,,,dX8XShLEmEGYhtDJj0vJRQ,Al7ZXpJERRG3222pHxI4VA,,,N,0,0,,,2013-06-23 13:01,2013-06-23 13:01,admin,admin
1148,87113,1346,11586,1473,1,0,N,N,N,CP_Phys,TT_Task,DT_FixedDrtn,RV_OK,TK_NotStart,OCEC11801,"Bedding, Compaction and Levelling",2984,689,0,60,0,180,180,60,60,0,60,,,,2013-10-14 16:00,2013-10-22 16:00,,2013-07-08 07:00,2013-07-15 17:00,2013-07-08 07:00,2013-07-15 17:00,2013-07-08 07:00,2013-07-15 17:00,,2013-10-14 16:00,2013-10-22 16:00,,PT_Normal,,,,,oME9I3MgtkGWtk0PLp8YMg,uQEjLGhYSny8lNrPMtMIeg,,,N,0,0,,,2013-06-23 13:01,2013-06-23 13:01,admin,admin
1149,87114,1346,11586,1473,1,0,N,N,N,CP_Phys,TT_Task,DT_FixedDrtn,RV_OK,TK_NotStart,OCEC11811,Pipe lowering,2971,689,0,80,0,560,560,80,160,0,160,,,,2013-12-14 16:00,2013-12-24 16:00,,2013-09-07 07:00,2013-09-16 17:00,2013-09-07 07:00,2013-09-16 17:00,2013-09-07 07:00,2013-09-16 17:00,,2013-12-14 16:00,2013-12-24 16:00,,PT_Normal,,,,,LheNiaUB2kaPwXQETtOYjw,OZPvwu1dSji2nKraqrlt0g,,,N,0,0,,,2013-06-23 13:01,2013-06-23 13:01,admin,admin
1150,87115,1346,11586,1473,1,0,N,N,N,CP_Phys,TT_Task,DT_FixedDrtn,RV_OK,TK_NotStart,OCEC11821,Pipe joining,2971,689,0,80,0,320,320,80,80,0,80,,,,2013-12-18 16:00,2013-12-30 16:00,,2013-09-11 07:00,2013-09-22 17:00,2013-09-11 07:00,2013-09-22 17:00,2013-09-11 07:00,2013-09-22 17:00,,2013-12-18 16:00,2013-12-30 16:00,,PT_Normal,,,,,7ZQ9C3WpGkGv1WmYZ6QTEQ,6kGgJy2ESQehWe/eilYkmQ,,,N,0,0,,,2013-06-23 13:01,2013-06-23 13:01,admin,admin
1151,87116,1346,11586,1473,1,0,N,N,N,CP_Phys,TT_Task,DT_FixedDrtn,RV_OK,TK_NotStart,OCEC11831,Backfilling and Compaction,2984,689,0,80,0,480,480,80,240,0,240,,,,2013-12-30 16:00,2014-01-11 16:00,,2013-09-23 07:00,2013-10-02 17:00,2013-09-23 07:00,2013-10-02 17:00,2013-09-23 07:00,2013-10-02 17:00,,2013-12-30 16:00,2014-01-11 16:00,,PT_Normal,,,,,XkKwdBu/bUqzFXKIO+9PaQ,+KnisPcWSoK60vdZbHHUhw,,,N,0,0,,,2013-06-23 13:01,2013-06-23 13:01,admin,admin
1152,87117,1346,11586,1473,1,0,N,N,N,CP_Phys,TT_Task,DT_FixedDrtn,RV_OK,TK_NotStart,OCEC11841,Construction of Catch Pits and hook up,2981,689,0,250,0,1750,1750,250,0,0,0,,,,2013-11-02 16:00,2013-12-09 16:00,,2013-07-27 07:00,2013-09-01 17:00,2013-07-27 07:00,2013-09-01 17:00,2013-07-27 07:00,2013-09-01 17:00,,2013-11-02 16:00,2013-12-09 16:00,,PT_Normal,,,,,krVPTGc5AUyAVzRg6w8WbA,XuHFTqhaT4ij2cFKPfxKkw,,,N,0,0,,,2013-06-23 13:01,2013-06-23 13:01,admin,admin
1153,87118,1346,11586,1473,1,0,N,N,N,CP_Phys,TT_Task,DT_FixedDrtn,RV_OK,TK_NotStart,OCEC11851,Inspection and Testing,2969,689,680,40,0,80,80,40,0,0,0,,,,2014-01-11 16:00,2014-01-15 16:00,,2013-10-05 07:00,2013-10-08 17:00,2013-10-05 07:00,2013-10-08 17:00,2013-10-05 07:00,2013-10-08 17:00,,2014-01-11 16:00,2014-01-15 16:00,,PT_Normal,,,,,1Gnjeaqfn0WdoSjuvUVOig,LwgYAQuZQSiAvdrYIIJ9qA,,,N,0,0,,,2013-06-23 13:01,2013-06-23 13:01,admin,admin
1154,87119,1346,11586,1473,1,0,N,N,N,CP_Phys,TT_Task,DT_FixedDrtn,RV_OK,TK_NotStart,OCEC18681,Construction of Grate Opennings,2969,689,0,60,0,420,420,60,0,0,0,,,,2013-12-09 16:00,2013-12-17 16:00,,2013-09-02 07:00,2013-09-09 17:00,2013-09-02 07:00,2013-09-09 17:00,2013-09-02 07:00,2013-09-09 17:00,,2013-12-09 16:00,2013-12-17 16:00,,PT_Normal,,,,,HZsfk6Ydok2xOzn7/M5Nsw,LyLzHc4HRom+o0R6k6lF9w,,,N,0,0,,,2013-06-23 13:01,2013-06-23 13:01,admin,admin
1155,87120,1346,11586,1473,1,0,N,N,N,CP_Phys,TT_Task,DT_FixedDrtn,RV_OK,TK_NotStart,OCEC18691,Pipe Culvert Construction,2971,689,0,100,0,300,300,100,0,0,0,,,,2013-10-19 16:00,2013-11-02 16:00,,2013-07-13 07:00,2013-07-24 17:00,2013-07-13 07:00,2013-07-24 17:00,2013-07-13 07:00,2013-07-24 17:00,,2013-10-19 16:00,2013-11-02 16:00,,PT_Normal,,,,,7YvjT9YEc0+8jLyoUvDtAQ,4d+xXWaAT1G5IO6gykpyxQ,,,N,0,0,,,2013-06-23 13:01,2013-06-23 13:01,admin,admin
1156,87121,1346,11586,1473,1,0,N,N,N,CP_Phys,TT_Task,DT_FixedDrtn,RV_OK,TK_NotStart,OCEC18701,Installation of Grated Channels,2971,689,0,250,0,750,750,250,0,0,0,,,,2013-11-02 16:00,2013-12-09 16:00,,2013-07-27 07:00,2013-09-01 17:00,2013-07-27 07:00,2013-09-01 17:00,2013-07-27 07:00,2013-09-01 17:00,,2013-11-02 16:00,2013-12-09 16:00,,PT_Normal,,,,,Ib+4KJLXZUSlyTd8oxaX+g,wRNm3aJ0TpGkSPnfTR+sFw,,,N,0,0,,,2013-06-23 13:01,2013-06-23 13:01,admin,admin
1157,87122,1346,11606,1473,1,0,N,N,N,CP_Phys,TT_Task,DT_FixedDrtn,RV_OK,TK_NotStart,OCEC12061,Precast Concrete Curb,2981,1049,0,40,0,1240,1240,40,0,0,0,,,,2013-12-24 16:00,2013-12-30 16:00,,2013-07-27 07:00,2013-07-30 17:00,2013-07-27 07:00,2013-07-30 17:00,2013-07-27 07:00,2013-07-30 17:00,,2013-12-24 16:00,2013-12-30 16:00,,PT_Normal,,,,,hk0ebRBnTk+Hqnf3ijUi2A,91NCags0RfGTEyrypY1S5w,,,N,0,0,,,2013-06-23 13:01,2013-06-23 13:01,admin,admin
1158,87123,1346,11606,1473,1,0,N,N,N,CP_Phys,TT_Task,DT_FixedDrtn,RV_OK,TK_NotStart,OCEC11861,Removal of Structures and Obstructions,,969,0,120,0,0,0,120,0,0,0,,,,2013-10-22 16:00,2013-11-09 16:00,,2013-06-08 07:00,2013-06-23 17:00,2013-06-08 07:00,2013-06-23 17:00,2013-06-08 07:00,2013-06-23 17:00,,2013-10-22 16:00,2013-11-09 16:00,,PT_Normal,,,,,R463Hqr0KEig1JG0FrNHWw,U8YH3IijTeq8FGbiAwPiOQ,,,N,0,0,,,2013-06-23 13:01,2013-06-23 13:01,admin,admin
1159,87124,1346,11606,1473,1,0,N,N,N,CP_Phys,TT_Task,DT_FixedDrtn,RV_OK,TK_NotStart,OCEC11871,Embankment filling and sub grade preparation,2984,1049,0,120,0,1800,1800,120,720,0,720,,,,2013-12-11 16:00,2013-12-29 16:00,,2013-07-14 07:00,2013-07-29 17:00,2013-07-14 07:00,2013-07-29 17:00,2013-07-14 07:00,2013-07-29 17:00,,2013-12-11 16:00,2013-12-29 16:00,,PT_Normal,,,,,CpHc+QdNq0+kN44cNbLm4w,MwDOSAGvRZqtd1zg0Q6kKg,,,N,0,0,,,2013-06-23 13:01,2013-06-23 13:01,admin,admin
1160,87125,1346,11606,1473,1,0,N,N,N,CP_Phys,TT_Task,DT_FixedDrtn,RV_OK,TK_NotStart,OCEC11881,Granular sub base course Class B - 150 mm thick,3001,1049,0,60,0,720,720,60,360,0,360,,,,2013-12-16 16:00,2013-12-24 16:00,,2013-07-17 07:00,2013-07-24 17:00,2013-07-17 07:00,2013-07-24 17:00,2013-07-17 07:00,2013-07-24 17:00,,2013-12-16 16:00,2013-12-24 16:00,,PT_Normal,,,,,o9MYagdjXEmRHKx3kRrULg,FvL23z/uRuWSpEbvfs07ew,,,N,0,0,,,2013-06-23 13:01,2013-06-23 13:01,admin,admin
1161,87126,1346,11606,1473,1,0,N,N,N,CP_Phys,TT_Task,DT_FixedDrtn,RV_OK,TK_NotStart,OCEC11891,Aggregate base course Class A - 100 mm and 150 mm thick,2969,1049,0,30,0,330,330,30,150,0,150,,,,2013-12-30 16:00,2014-01-04 16:00,,2013-07-31 07:00,2013-08-04 17:00,2013-07-31 07:00,2013-08-04 17:00,2013-07-31 07:00,2013-08-04 17:00,,2013-12-30 16:00,2014-01-04 16:00,,PT_Normal,,,,,3lvA7wlEpky2H7ISPqhNqQ,RuDZVpXFRYq6irtHS9Vd4w,,,N,0,0,,,2013-06-23 13:01,2013-06-23 13:01,admin,admin
1162,87127,1346,11606,1473,1,0,N,N,N,CP_Phys,TT_Task,DT_FixedDrtn,RV_OK,TK_NotStart,OCEC11901,Bituminous prime coat and bituminous base course Class A - 50 mm thick,2969,1049,0,45,0,382.5,382.5,45,225,0,225,,,,2014-01-01 16:00,2014-01-08 11:00,,2013-08-04 07:00,2013-08-12 12:00,2013-08-04 07:00,2013-08-12 12:00,2013-08-04 07:00,2013-08-12 12:00,,2014-01-01 16:00,2014-01-08 11:00,,PT_Normal,,,,,Fs61BpA4REGF8kL5nQKd4w,0cdSb7mCT8yco0/3bIoelA,,,N,0,0,,,2013-06-23 13:01,2013-06-23 13:01,admin,admin
1163,87128,1346,11606,1473,1,0,N,N,N,CP_Phys,TT_Task,DT_FixedDrtn,RV_OK,TK_NotStart,OCEC11911,Bituminous take coat and bituminous wearing course Class A - 50 mm thick,2969,1049,1040,90,0,877.5,877.5,90,562.5,0,562.5,,,,2014-01-04 16:00,2014-01-15 16:00,,2013-08-05 07:00,2013-08-19 17:00,2013-08-05 07:00,2013-08-19 17:00,2013-08-05 07:00,2013-08-19 17:00,,2014-01-04 16:00,2014-01-15 16:00,,PT_Normal,,,,,k1S05OEMr0aAJhddYFdmDg,zL5CXVLVQ/K4A3uqhReZSA,,,N,0,0,,,2013-06-23 13:01,2013-06-23 13:01,admin,admin
1164,87129,1346,11606,1473,1,0,N,N,N,CP_Phys,TT_Task,DT_FixedDrtn,RV_OK,TK_NotStart,OCEC11921,Unclassified excavation and removal,,1049,0,80,0,960,960,80,480,0,480,,,,2013-12-03 16:00,2013-12-15 16:00,,2013-07-06 07:00,2013-07-15 17:00,2013-07-06 07:00,2013-07-15 17:00,2013-07-06 07:00,2013-07-15 17:00,,2013-12-03 16:00,2013-12-15 16:00,,PT_Normal,,,,,8c8JY4LZMU+tDhHWQA8Lcw,abcFyYStToeJvBl64h9H8A,,,N,0,0,,,2013-06-23 13:01,2013-06-23 13:01,admin,admin
1165,87130,1346,11606,1473,1,0,N,N,N,CP_Phys,TT_Task,DT_FixedDrtn,RV_OK,TK_NotStart,OCEC12111,Clearing and grubbing,2969,969,0,40,0,320,320,40,160,0,160,,,,2013-11-09 16:00,2013-11-13 16:00,,2013-06-24 07:00,2013-06-29 17:00,2013-06-24 07:00,2013-06-29 17:00,2013-06-24 07:00,2013-06-29 17:00,,2013-11-09 16:00,2013-11-13 16:00,,PT_Normal,,,,,5uWVu3JMPEe3VrcSNJaxsA,EaK3Mgr5QaSvd9iQASHfHw,,,N,0,0,,,2013-06-23 13:01,2013-06-23 13:01,admin,admin
1166,87131,1346,11606,1473,1,0,N,N,N,CP_Phys,TT_Task,DT_FixedDrtn,RV_OK,TK_NotStart,OCEC12131,Setting out and route survey,2983,969,0,40,0,80,80,40,40,0,40,,,,2013-11-13 16:00,2013-11-23 16:00,,2013-06-30 07:00,2013-07-03 17:00,2013-06-30 07:00,2013-07-03 17:00,2013-06-30 07:00,2013-07-03 17:00,,2013-11-13 16:00,2013-11-23 16:00,,PT_Normal,,,,,TqPioGO7W0iGj71Xzfy3pw,/DuU5qmQTAeINDasHSyYZA,,,N,0,0,,,2013-06-23 13:01,2013-06-23 13:01,admin,admin
1167,87132,1346,11588,1473,0,0,N,N,N,CP_Phys,TT_Mile,DT_FixedDrtn,RV_OK,TK_NotStart,OCEC12101,Completion of Works in Road no. 7,,9,0,0,0,0,0,0,0,0,0,,,,2014-01-15 16:00,2014-01-15 16:00,,2014-01-15 07:00,2014-01-15 07:00,2014-01-15 07:00,2014-01-15 07:00,2014-01-15 07:00,2014-01-15 07:00,,2014-01-15 16:00,2014-01-15 16:00,,PT_Normal,,,,,BCcLlagzuUicuSFU9gywGA,UHyspxjNR2K/uvdB9jfCBA,,,N,0,0,,,2013-06-23 13:01,2013-06-23 13:01,admin,admin
1168,87133,1346,11589,1473,1,0,N,N,N,CP_Phys,TT_Task,DT_FixedDrtn,RV_OK,TK_NotStart,OCEC12081,Install W-Beam Guardrail transition Section and terminal end,2969,1209,0,100,0,1800,1800,100,200,0,200,,,,2013-12-24 16:00,2014-01-07 16:00,,2013-07-03 07:00,2013-07-16 17:00,2013-07-03 07:00,2013-07-16 17:00,2013-07-03 07:00,2013-07-16 17:00,,2013-12-24 16:00,2014-01-07 16:00,,PT_Normal,,,,,YuBbsVkmnUa1I0DkSV6aUQ,Fd9SLEpORiidETB0y+vgRg,,,N,0,0,,,2013-06-23 13:01,2013-06-23 13:01,admin,admin
1169,87134,1346,11589,1473,1,0,N,N,N,CP_Phys,TT_Task,DT_FixedDrtn,RV_OK,TK_NotStart,OCEC18811,Concrete Barrier Works,2969,1209,10,60,0,1080,1080,60,120,0,120,,,,2014-01-07 16:00,2014-01-15 16:00,,2013-07-17 07:00,2013-07-24 17:00,2013-07-17 07:00,2013-07-24 17:00,2013-07-17 07:00,2013-07-24 17:00,,2014-01-07 16:00,2014-01-15 16:00,,PT_Normal,,,,,AUoM1PP1XkCQGhjaeIJDEg,BuQlj8GqS3WKqb+GEqgLOA,,,N,0,0,,,2013-06-23 13:01,2013-06-23 13:01,admin,admin
1170,87135,1346,11589,1473,1,0,N,N,N,CP_Phys,TT_Task,DT_FixedDrtn,RV_OK,TK_NotStart,OCEC18821,Chain Link Fence to Master Plan Boundary,,1199,1190,250,0,0,0,250,0,0,0,,,,2013-12-11 16:00,2014-01-15 16:00,,2013-06-23 07:00,2013-07-27 17:00,2013-06-23 07:00,2013-07-27 17:00,2013-06-23 07:00,2013-07-27 17:00,,2013-12-11 16:00,2014-01-15 16:00,,PT_Normal,,,,,u+fQwmM6BkWatGkpBUnHGA,6NkMci4DSEegKP3jAVNViw,,,N,0,0,,,2013-06-23 13:01,2013-06-23 13:01,admin,admin
1171,87136,1346,11589,1473,1,0,N,N,N,CP_Phys,TT_Task,DT_FixedDrtn,RV_OK,TK_NotStart,OCEC19691,Setting out and Survey Works,2971,1209,0,30,0,60,60,30,30,0,30,,,,2013-12-21 16:00,2013-12-24 16:00,,2013-06-30 07:00,2013-07-02 17:00,2013-06-30 07:00,2013-07-02 17:00,2013-06-30 07:00,2013-07-02 17:00,,2013-12-21 16:00,2013-12-24 16:00,,PT_Normal,,,,,6K5dlxoAtE+4JSdvW6pjIg,CBT3qnVdTrifyCgTxmBaCQ,,,N,0,0,,,2013-06-23 13:01,2013-06-23 13:01,admin,admin
1172,87137,1346,11590,1473,1,0,N,N,N,CP_Phys,TT_Task,DT_FixedDrtn,RV_OK,TK_NotStart,OCEC12051,Precast Concrete tile Paving 60 mm thick,2969,1269,0,60,0,1920,1920,60,60,0,60,,,,2013-12-28 16:00,2014-01-05 16:00,,2013-06-29 07:00,2013-07-06 17:00,2013-06-29 07:00,2013-07-06 17:00,2013-06-29 07:00,2013-07-06 17:00,,2013-12-28 16:00,2014-01-05 16:00,,PT_Normal,,,,,PJc3/nkWZke4orAWyADyPg,C/x/ASmJRwWP0Dzoh9WzSw,,,N,0,0,,,2013-06-23 13:01,2013-06-23 13:01,admin,admin
1173,87138,1346,11590,1473,1,0,N,N,N,CP_Phys,TT_Task,DT_FixedDrtn,RV_OK,TK_NotStart,OCEC12071,Traffic Signs,2969,1189,0,60,0,780,780,60,120,0,120,,,,2013-12-30 16:00,2014-01-07 16:00,,2013-07-13 07:00,2013-07-20 17:00,2013-07-13 07:00,2013-07-20 17:00,2013-07-13 07:00,2013-07-20 17:00,,2013-12-30 16:00,2014-01-07 16:00,,PT_Normal,,,,,qFGkub+srk2YiMIayoLE7Q,VtUiMWw7SnyPYf/SlaxKkQ,,,N,0,0,,,2013-06-23 13:01,2013-06-23 13:01,admin,admin
1174,87139,1346,11590,1473,1,0,N,N,N,CP_Phys,TT_Task,DT_FixedDrtn,RV_OK,TK_NotStart,OCEC12091,Riprap Works,2981,1269,0,60,0,1200,1200,60,240,0,240,,,,2013-12-30 16:00,2014-01-07 16:00,,2013-07-01 07:00,2013-07-08 17:00,2013-07-01 07:00,2013-07-08 17:00,2013-07-01 07:00,2013-07-08 17:00,,2013-12-30 16:00,2014-01-07 16:00,,PT_Normal,,,,,rhynQuBKO0imxP67NTiqDw,R4Bc/Yl4Sd2WMZ57FrHblA,,,N,0,0,,,2013-06-23 13:01,2013-06-23 13:01,admin,admin
1175,87140,1346,11590,1473,1,0,N,N,N,CP_Phys,TT_Task,DT_FixedDrtn,RV_OK,TK_NotStart,OCEC18731,Gabions Works,2969,1269,0,60,0,1200,1200,60,240,0,240,,,,2013-12-30 16:00,2014-01-07 16:00,,2013-07-01 07:00,2013-07-08 17:00,2013-07-01 07:00,2013-07-08 17:00,2013-07-01 07:00,2013-07-08 17:00,,2013-12-30 16:00,2014-01-07 16:00,,PT_Normal,,,,,e8myenPCwEabfk5BCiWzxQ,0HJfZM/zRJ+RuEKgRc0I1g,,,N,0,0,,,2013-06-23 13:01,2013-06-23 13:01,admin,admin
1176,87141,1346,11590,1473,1,0,N,N,N,CP_Phys,TT_Task,DT_FixedDrtn,RV_OK,TK_NotStart,OCEC18741,Ditch Lining Works,2969,1269,0,60,0,960,960,60,0,0,0,,,,2013-12-30 16:00,2014-01-07 16:00,,2013-07-01 07:00,2013-07-08 17:00,2013-07-01 07:00,2013-07-08 17:00,2013-07-01 07:00,2013-07-08 17:00,,2013-12-30 16:00,2014-01-07 16:00,,PT_Normal,,,,,oiFQ88VPPki4mMVqO6IXJA,l5dCaJ6RQ1qGKzJeBmM9Yg,,,N,0,0,,,2013-06-23 13:01,2013-06-23 13:01,admin,admin
1177,87142,1346,11590,1473,1,0,N,N,N,CP_Phys,TT_Task,DT_FixedDrtn,RV_OK,TK_NotStart,OCEC18751,Coastal Protection Works,2969,1269,1260,60,0,1200,1200,60,240,0,240,,,,2014-01-07 16:00,2014-01-15 16:00,,2013-07-09 07:00,2013-07-16 17:00,2013-07-09 07:00,2013-07-16 17:00,2013-07-09 07:00,2013-07-16 17:00,,2014-01-07 16:00,2014-01-15 16:00,,PT_Normal,,,,,Gme76QVVd02O3VfWuEl8sA,PnJ6Fe1tRNu7GKFCXvykLw,,,N,0,0,,,2013-06-23 13:01,2013-06-23 13:01,admin,admin
1178,87143,1346,11590,1473,1,0,N,N,N,CP_Phys,TT_Task,DT_FixedDrtn,RV_OK,TK_NotStart,OCEC18761,Interlok Tiles,2981,1289,1280,120,0,1920,1920,120,0,0,0,,,,2013-12-30 16:00,2014-01-15 16:00,,2013-06-29 07:00,2013-07-14 17:00,2013-06-29 07:00,2013-07-14 17:00,2013-06-29 07:00,2013-07-14 17:00,,2013-12-30 16:00,2014-01-15 16:00,,PT_Normal,,,,,8smIZthQUUucXrOtuk8F8A,adX6ZmQIRPm03sZuHRU3kg,,,N,0,0,,,2013-06-23 13:01,2013-06-23 13:01,admin,admin
1179,87144,1346,11590,1473,1,0,N,N,N,CP_Phys,TT_Task,DT_FixedDrtn,RV_OK,TK_NotStart,OCEC18771,Road Marking and Studs,2969,1189,1180,120,0,1440,1440,120,0,0,0,,,,2013-12-30 16:00,2014-01-15 16:00,,2013-07-13 07:00,2013-07-28 17:00,2013-07-13 07:00,2013-07-28 17:00,2013-07-13 07:00,2013-07-28 17:00,,2013-12-30 16:00,2014-01-15 16:00,,PT_Normal,,,,,Wxs5EVY870WoNlpA3tAlzQ,SvdX4t7tRfGJqJBROvzLbQ,,,N,0,0,,,2013-06-23 13:01,2013-06-23 13:01,admin,admin
1180,87145,1346,11591,1473,1,0,N,N,N,CP_Phys,TT_Task,DT_FixedDrtn,RV_OK,TK_NotStart,OCEC11741,Trench excavation,2984,819,0,60,0,420,420,60,120,0,120,,,,2013-08-24 16:00,2013-09-01 16:00,,2013-04-29 07:00,2013-05-06 17:00,2013-04-29 07:00,2013-05-06 17:00,2013-04-29 07:00,2013-05-06 17:00,,2013-08-24 16:00,2013-09-01 16:00,,PT_Normal,,,,,T5QbhOmVyk6d10NdEd8wsg,x222NY8qTUiA6ISVF9Kcog,,,N,0,0,,,2013-06-23 13:01,2013-06-23 13:01,admin,admin
1181,87146,1346,11591,1473,1,0,N,N,N,CP_Phys,TT_Task,DT_FixedDrtn,RV_OK,TK_NotStart,OCEC11751,Preparation of bed,2971,819,0,40,0,280,280,40,40,0,40,,,,2013-09-01 16:00,2013-09-07 16:00,,2013-05-07 07:00,2013-05-12 17:00,2013-05-07 07:00,2013-05-12 17:00,2013-05-07 07:00,2013-05-12 17:00,,2013-09-01 16:00,2013-09-07 16:00,,PT_Normal,,,,,KtqGLddFck6t2rD7YKJbXA,TJGbEed+TpSRa9OdinMEEA,,,N,0,0,,,2013-06-23 13:01,2013-06-23 13:01,admin,admin
1182,87147,1346,11591,1473,1,0,N,N,N,CP_Phys,TT_Task,DT_FixedDrtn,RV_OK,TK_NotStart,OCEC11762,Construction of utilites crossing (Duct),2971,819,0,60,0,780,780,60,120,0,120,,,,2013-09-07 16:00,2013-09-15 16:00,,2013-05-13 07:00,2013-05-20 17:00,2013-05-13 07:00,2013-05-20 17:00,2013-05-13 07:00,2013-05-20 17:00,,2013-09-07 16:00,2013-09-15 16:00,,PT_Normal,,,,,OjdkTiviv0C9o1TrK7JP/A,meoKo84KQLefG1vD9TonrQ,,,N,0,0,,,2013-06-23 13:01,2013-06-23 13:01,admin,admin
1183,87148,1346,11591,1473,1,0,N,N,N,CP_Phys,TT_Task,DT_FixedDrtn,RV_OK,TK_NotStart,OCEC11771,Backfilling and compaction,2984,819,0,80,0,720,720,80,240,0,240,,,,2013-09-15 16:00,2013-09-25 16:00,,2013-05-21 07:00,2013-06-01 17:00,2013-05-21 07:00,2013-06-01 17:00,2013-05-21 07:00,2013-06-01 17:00,,2013-09-15 16:00,2013-09-25 16:00,,PT_Normal,,,,,mpfYjDMDF0WEMhWXfV/4Gw,Zf0AZXURT5i0OBg71GpVlA,,,N,0,0,,,2013-06-23 13:01,2013-06-23 13:01,admin,admin
1184,87149,1346,11591,1473,1,0,N,N,N,CP_Phys,TT_Task,DT_FixedDrtn,RV_OK,TK_NotStart,OCEC12121,Setting out and route survey,2983,819,0,40,0,80,80,40,40,0,40,,,,2013-08-18 16:00,2013-08-24 16:00,,2013-04-23 07:00,2013-04-28 17:00,2013-04-23 07:00,2013-04-28 17:00,2013-04-23 07:00,2013-04-28 17:00,,2013-08-18 16:00,2013-08-24 16:00,,PT_Normal,,,,,C/gV1qNH4UufdgN+1LZ6hA,ZsAy7i7QSnKL/3QudVcpjA,,,N,0,0,,,2013-06-23 13:01,2013-06-23 13:01,admin,admin
1185,87150,1346,11591,1473,1,0,N,N,N,CP_Phys,TT_Task,DT_FixedDrtn,RV_OK,TK_NotStart,OCEC11763,Inspection and Testing,2971,969,0,40,0,80,80,40,0,0,0,,,,2013-10-16 16:00,2013-10-22 16:00,,2013-06-02 07:00,2013-06-05 17:00,2013-06-02 07:00,2013-06-05 17:00,2013-06-02 07:00,2013-06-05 17:00,,2013-10-16 16:00,2013-10-22 16:00,,PT_Normal,,,,,aSim8Fe8TUmjAqPijDw6mg,277GCVMsQemGwcTi9lCfDg,,,N,0,0,,,2013-06-23 13:01,2013-06-23 13:01,admin,admin
1186,87335,1346,11494,1473,1,0,N,N,N,CP_Drtn,TT_Task,DT_FixedDUR2,RV_OK,TK_Active,A15130,Confirmation Regarding Drainage channel /inspection chamber Overburden / max height at Zone 10 (OCEC - 3),,1074,355,40,0,0,0,90,0,0,0,,2013-04-14 07:00,,2013-09-23 11:00,2013-09-29 11:00,,2013-04-23 07:00,2013-04-28 17:00,2013-04-23 07:00,2013-04-28 17:00,2013-04-14 07:00,2013-04-24 17:00,,2013-09-23 11:00,2013-09-29 11:00,,PT_Normal,,,,,VMPa2lJNEU6hCUlrKi6E+A,,,,N,0,0,,,2013-06-23 13:01,2013-06-23 13:01,admin,admin
1187,87336,1346,11494,1473,1,0,N,N,N,CP_Drtn,TT_Task,DT_FixedDUR2,RV_OK,TK_NotStart,A15131,"Confirmation on architectural pattern details for pier columns, abutment & other exposed surface",,0,0,60,0,0,0,60,0,0,0,2013-04-27 00:00,,,2013-04-27 07:00,2013-05-04 17:00,,2013-04-27 07:00,2013-05-04 17:00,2013-04-27 07:00,2013-05-04 17:00,2013-04-27 07:00,2013-05-04 17:00,,2013-04-27 07:00,2013-05-04 17:00,CS_MSOA,PT_Normal,,,,,rDUe4bVyxUSeS9nh7afrSQ,,,,Y,0,0,,,2013-06-23 13:01,2013-06-23 13:01,admin,admin
1188,87337,1346,11494,1473,1,0,N,N,N,CP_Drtn,TT_Task,DT_FixedDUR2,RV_OK,TK_NotStart,A15132,"Confirmation on IL, utilities crossings through rectangular drain at OCEC-6",,729,0,90,0,0,0,90,0,0,0,2013-04-27 00:00,,,2013-08-05 16:00,2013-08-20 16:00,,2013-04-27 07:00,2013-05-07 17:00,2013-04-27 07:00,2013-05-07 17:00,2013-04-27 07:00,2013-05-07 17:00,,2013-08-05 16:00,2013-08-20 16:00,CS_MSOA,PT_Normal,,,,,cCTcrwRank2BrxWSJQ31WQ,,,,N,0,0,,,2013-06-23 13:01,2013-06-23 13:01,admin,admin
1189,87338,1346,11494,1473,1,0,N,N,N,CP_Drtn,TT_Task,DT_FixedDUR2,RV_OK,TK_NotStart,A15133,"Confirmation on IL, utilities crossings through rectangular drain at OCEC-5",,1489,0,90,0,0,0,90,0,0,0,2013-05-01 00:00,,,2013-12-01 16:00,2013-12-14 16:00,,2013-05-01 07:00,2013-05-13 17:00,2013-05-01 07:00,2013-05-13 17:00,2013-05-01 07:00,2013-05-13 17:00,,2013-12-01 16:00,2013-12-14 16:00,CS_MSOA,PT_Normal,,,,,aRAOcEtYxUCr0BlIxUdM8Q,,,,N,0,0,,,2013-06-23 13:01,2013-06-23 13:01,admin,admin
1190,87339,1346,11494,1473,1,0,N,N,N,CP_Drtn,TT_Task,DT_FixedDUR2,RV_OK,TK_NotStart,A15134,Confirmation on Electrical cable running parallel to rectangular drain and intesecting some location at OCEC -4,,1709,1709,90,0,0,0,90,0,0,0,2013-05-05 00:00,,,2014-01-04 16:00,2014-01-15 16:00,,2013-05-05 07:00,2013-05-15 17:00,2013-05-05 07:00,2013-05-15 17:00,2013-05-05 07:00,2013-05-15 17:00,,2014-01-04 16:00,2014-01-15 16:00,CS_MSOA,PT_Normal,,,,,PbWZKX9Yl0CGjsF3CQkgYw,,,,N,0,0,,,2013-06-23 13:01,2013-06-23 13:01,admin,admin
1191,87340,1346,11494,1473,1,0,N,N,N,CP_Drtn,TT_Task,DT_FixedDUR2,RV_OK,TK_NotStart,A15135,Confirmation on MSE Wall construction at OCEC -7,,9,0,90,0,0,0,90,0,0,0,,,,2013-04-23 16:00,2013-05-06 16:00,,2013-04-23 07:00,2013-05-05 17:00,2013-04-23 07:00,2013-05-05 17:00,2013-04-23 07:00,2013-05-05 17:00,,2013-04-23 16:00,2013-05-06 16:00,,PT_Normal,,,,,7dzpZ8di1UiuhqqshrnqGw,,,,N,0,0,,,2013-06-23 13:01,2013-06-23 13:01,admin,admin
1192,87341,1346,11494,1473,1,0,N,N,N,CP_Drtn,TT_Task,DT_FixedDUR2,RV_OK,TK_NotStart,A15137,Confirmation of location of substation and pumproom to be finalised,,489,320,90,0,0,0,90,0,0,0,,,,2013-06-30 16:00,2013-07-13 16:00,,2013-04-23 07:00,2013-05-05 17:00,2013-04-23 07:00,2013-05-05 17:00,2013-04-23 07:00,2013-05-05 17:00,,2013-06-30 16:00,2013-07-13 16:00,,PT_Normal,,,,,1FoEbuDbwkiIbMZA0EXq7A,,,,N,0,0,,,2013-06-23 13:01,2013-06-23 13:01,admin,admin
