,task_id,proj_id,wbs_id,clndr_id,est_wt,phys_complete_pct,rev_fdbk_flag,lock_plan_flag,auto_compute_act_flag,complete_pct_type,task_type,duration_type,review_type,status_code,task_code,task_name,rsrc_id,total_float_hr_cnt,free_float_hr_cnt,remain_drtn_hr_cnt,act_work_qty,remain_work_qty,target_work_qty,target_drtn_hr_cnt,target_equip_qty,act_equip_qty,remain_equip_qty,cstr_date,act_start_date,act_end_date,late_start_date,late_end_date,expect_end_date,early_start_date,early_end_date,restart_date,reend_date,target_start_date,target_end_date,review_end_date,rem_late_start_date,rem_late_end_date,cstr_type,priority_type,suspend_date,resume_date,float_path,float_path_order,guid,tmpl_guid,cstr_date2,cstr_type2,driving_path_flag,act_this_per_work_qty,act_this_per_equip_qty,external_early_start_date,external_late_end_date,create_date,update_date,create_user,update_user,old_restart_date,old_reend_date,old_remain_drtn_hr_cnt
0,12456181,14517,6815800,13330,1,100,N,N,N,CP_Units,TT_Task,DT_FixedDUR2,RV_OK,TK_Complete,CO05AMF200,05A Final Tank Design Loads Submitted by DSD,,,,0,0,0,0,40,0,0,0,,2006-06-01 00:00,2006-06-05 00:00,2007-03-21 08:01,2007-03-21 08:01,,2007-01-27 00:00,2007-01-27 00:00,,,2006-06-12 08:00,2006-06-16 17:00,,,,,PT_Normal,,,,,8TDsAtRcR+aErP3bnSEcpg,3JoYTqfGIkKIerLPqY7OoB,,,N,0,0,,,2007-02-01 02:41,2007-02-04 01:05,hbe4678,hbe4678,,,0
1,12456182,14517,6815800,13330,1,100,N,N,N,CP_Units,TT_Task,DT_FixedDUR2,RV_OK,TK_Complete,EK05AMD100,05A Review & Select Ammonia Tank Design,,,,0,0,0,0,120,0,0,0,,2006-06-06 00:00,2006-07-17 17:00,2007-03-21 08:01,2007-03-21 08:01,,2007-01-27 00:00,2007-01-27 00:00,,,2006-06-19 08:00,2006-07-07 17:00,,,,,PT_Normal,,,,,oqnO7Da9Rxm6rRctHQ0OMg,l2l347KjBEG13cFesJ+Icg,,,N,0,0,,,2007-02-01 02:41,2007-02-04 01:05,hbe4678,hbe4678,,,0
2,12456183,14517,6815800,13330,1,100,N,N,N,CP_Units,TT_Task,DT_FixedDUR2,RV_OK,TK_Complete,EK05ACV110,05A Update Model & Issue Fnd Dwgs-IFC (Ammonia Tanks),,,,0,0,0,0,200,0,0,0,,2006-08-14 00:00,2006-11-13 08:00,2007-03-21 08:01,2007-03-21 08:01,,2007-01-27 00:00,2007-01-27 00:00,,,2006-08-29 08:00,2006-10-02 17:00,,,,,PT_Normal,,,,,4NG74o9TQuefSbz1JSohsg,BuD7BzqAQkussgSgbU1RhA,,,N,0,0,,,2007-02-01 02:41,2007-02-04 01:05,hbe4678,hbe4678,,,0
3,12456184,14517,6815800,13330,1,100,N,N,N,CP_Units,TT_Task,DT_FixedDUR2,RV_OK,TK_Complete,EK05ACV100,05A Soils Investigation - Golder Review & Report,,,,0,0,0,0,160,0,0,0,,2006-05-22 08:00,2006-07-03 17:00,2007-03-21 08:01,2007-03-21 08:01,,2007-01-27 00:00,2007-01-27 00:00,,,2006-05-22 08:00,2006-06-16 17:00,,,,,PT_Normal,,,,,tG8kff+wThKnIFbwFYX7Mw,l2l347KjBEG13cFesJ+Icg,,,N,0,0,,,2007-02-01 02:41,2007-02-04 01:05,hbe4678,hbe4678,,,0
4,12456185,14517,6815801,13329,1,100,N,N,N,CP_Units,TT_Task,DT_FixedDUR2,RV_OK,TK_Complete,CO01GA0115,01G Erect Control Building (Columns & Parapet Only),1352,,,0,0,0,0,1504,0,0,0,,2006-05-03 08:00,2006-07-27 00:00,2007-01-10 08:00,2007-01-10 08:00,,2007-01-27 00:00,2007-01-27 00:00,,,2006-05-03 08:00,2006-12-28 17:00,,,,,PT_Normal,,,,,D6xCNXFfS+64mazkRR+Ieg,V3RN5mr2TWK0CKiV5gfjRQ,,,N,0,0,,,2007-02-01 02:41,2007-02-04 01:05,hbe4678,hbe4678,,,0
5,12456186,14517,6815802,13329,1,100,N,N,N,CP_Units,TT_Task,DT_FixedDUR2,RV_OK,TK_Complete,PO000MF000,"Field Erected Tanks Subcontract - Prepare Inquiry, Bid, NTP",,,,0,0,0,0,280,0,0,0,,2005-08-27 08:00,2006-02-03 00:00,2007-02-06 08:01,2007-02-06 08:01,,2007-01-27 00:00,2007-01-27 00:00,,,2005-08-27 08:00,2005-10-06 17:00,,,,,PT_Normal,,,,,42Wgev4mS6mI3wsU1gxkBw,Ys0WpgoCg0+NxnQgBaoRTB,,,N,0,0,,,2007-02-01 02:41,2007-02-04 01:05,hbe4678,hbe4678,,,0
6,12456187,14517,6815802,13329,1,100,N,N,N,CP_Units,TT_Task,DT_FixedDUR2,RV_OK,TK_Complete,PO000MF010,Field Erected Tanks Subcontract - Purchasing & Fabrication,,,,0,0,0,0,1392,0,0,0,,2006-02-04 00:00,2006-10-14 00:00,2007-02-06 08:01,2007-02-06 08:01,,2007-01-27 00:00,2007-01-27 00:00,,,2006-03-15 08:01,2006-10-16 08:01,,,,,PT_Normal,,,,,6OGrwWdQQAWZeFp3HYbjag,1JqOS93eckqPzNW9BiXqPB,,,N,0,0,,,2007-02-01 02:41,2007-02-04 01:05,hbe4678,hbe4678,,,0
7,12456188,14517,6815806,4047,1,0,N,N,N,CP_Drtn,TT_Task,DT_FixedDUR2,RV_OK,TK_NotStart,CO000E0500,Cathodic Protection - Installation,,48.0166666666667,0,960,0,0,0,960,0,0,0,,,,2007-06-12 08:01,2007-11-27 08:01,,2007-06-04 08:00,2007-11-16 17:00,2007-06-04 08:00,2007-11-16 17:00,2007-06-04 08:00,2007-11-16 17:00,,2007-06-12 08:01,2007-11-27 08:01,,PT_Normal,,,,,2OhfyvalT1uTDEcg82MLUw,RfORh0b6pU+5vK0fuvqC/Q,,,N,0,0,,,2007-02-01 02:41,2007-02-04 01:00,hbe4678,hbe4678,2007-06-04 08:00,2007-11-16 17:00,960
8,12456189,14517,6815806,4047,1,0,N,N,N,CP_Units,TT_WBS,DT_FixedDUR2,RV_OK,TK_NotStart,WP000U3100,Cathodic Protection,,48.0166666666667,2936,960,0,0,0,960,0,0,0,,,,2007-06-12 08:01,2007-11-27 08:01,,2007-06-04 08:00,2007-11-16 17:00,2007-06-04 08:00,2007-11-16 17:00,2007-06-04 08:00,2007-11-16 17:00,,2007-06-12 08:01,2007-11-27 08:01,,PT_Normal,,,,,I4OF131STrWYpOImn9eQjw,61hHSjC+o0S6yW3HOUqY4w,,,N,0,0,,,2007-02-01 02:41,2007-02-04 01:05,hbe4678,hbe4678,2007-06-04 08:00,2007-11-16 17:00,960
9,12456190,14517,6815808,13329,1,0,N,N,N,CP_Units,TT_LOE,DT_FixedDUR2,RV_OK,TK_Active,CK000P0110,000 Pipe Fabrication,,392.016666666667,0,1064,0,0,0,1192,0,0,0,,2006-09-16 08:00,,2006-09-16 08:00,2007-08-27 08:01,,2007-01-27 08:00,2007-06-30 17:00,2007-01-27 08:00,2007-06-30 17:00,2006-09-16 08:00,2007-04-04 17:00,,2006-09-16 08:00,2007-08-27 08:01,,PT_Normal,,,,,UMb9x/RVQhutOrI3aVFOVw,/HWPMxNImUmsnaKCQp8reR,,,N,0,0,,,2007-02-01 02:41,2007-02-04 01:05,hbe4678,hbe4678,2007-01-27 08:00,2007-06-30 17:00,1064
10,12456191,14517,6815809,13329,1,0,N,N,N,CP_Units,TT_Task,DT_FixedDUR2,RV_OK,TK_NotStart,CK05AP0110,05A A/G Pipe Spool Fabrication,,392.016666666667,0,232,0,0,0,232,0,0,0,2007-06-30 17:00,,,2007-07-24 08:01,2007-08-27 08:01,,2007-05-28 08:00,2007-06-30 17:00,2007-05-28 08:00,2007-06-30 17:00,2007-05-28 08:00,2007-06-30 17:00,,2007-07-24 08:01,2007-08-27 08:01,CS_MEOA,PT_Normal,,,,,hzALORP8RK+I488HAYAgng,jZRZhyKUFEGCZssE/33rux,,,N,0,0,,,2007-02-01 02:41,2007-02-04 01:00,hbe4678,hbe4678,2007-05-28 08:00,2007-06-30 17:00,232
11,12456192,14517,6815809,13329,1,0,N,N,N,CP_Units,TT_Task,DT_FixedDUR2,RV_OK,TK_NotStart,CK05BP0110,05B A/G Pipe Spool Fabrication,,392.016666666667,0,64,0,0,0,64,0,0,0,2007-06-30 17:00,,,2007-08-18 08:01,2007-08-27 08:01,,2007-06-21 08:00,2007-06-30 17:00,2007-06-21 08:00,2007-06-30 17:00,2007-06-21 08:00,2007-06-30 17:00,,2007-08-18 08:01,2007-08-27 08:01,CS_MEOA,PT_Normal,,,,,8DqwknF7Q6qznHdL32QaNA,75tXybj6YkyHzDCfcZI90B,,,N,0,0,,,2007-02-01 02:41,2007-02-04 01:00,hbe4678,hbe4678,2007-06-21 08:00,2007-06-30 17:00,64
12,12456193,14517,6815809,13329,1,0,N,N,N,CP_Units,TT_Task,DT_FixedDUR2,RV_OK,TK_NotStart,CK02HP0110,02H A/G Pipe Spool Fabrication,,408,0,280,0,0,0,280,0,0,0,2007-06-28 08:01,,,2007-07-17 08:01,2007-08-27 08:01,,2007-05-19 08:01,2007-06-28 08:01,2007-05-19 08:01,2007-06-28 08:01,2007-05-19 08:01,2007-06-28 08:01,,2007-07-17 08:01,2007-08-27 08:01,CS_MEOA,PT_Normal,,,,,RqGxz8KoQxGkRLmxBk9y+g,IaIlirHHVEm2k/OSsrDPWh,,,N,0,0,,,2007-02-01 02:41,2007-02-01 02:43,hbe4678,hbe4678,2007-05-19 08:01,2007-06-28 08:01,280
13,12456194,14517,6815809,13329,1,0,N,N,N,CP_Units,TT_Task,DT_FixedDUR2,RV_OK,TK_NotStart,CK02CP0110,02C A/G Pipe Spool Fabrication,,1072.01666666667,0,192,0,0,0,192,0,0,0,2007-03-18 17:00,,,2007-07-30 08:01,2007-08-27 08:01,,2007-02-24 08:00,2007-03-22 17:00,2007-02-24 08:00,2007-03-22 17:00,2007-02-24 08:00,2007-03-22 17:00,,2007-07-30 08:01,2007-08-27 08:01,CS_MEOA,PT_Normal,,,,,IsMAIVd5Spe67uV1/h54YA,Rvu3+nqDp065LIUGoaDS4h,,,N,0,0,,,2007-02-01 02:41,2007-02-04 01:00,hbe4678,hbe4678,2007-02-24 08:00,2007-03-22 17:00,192
14,12456195,14517,6815809,13329,1,0,N,N,N,CP_Units,TT_WBS,DT_FixedDUR2,RV_OK,TK_Active,WK000P0100,000 A/G Pipe Spool Fabrication,1342,392.016666666667,4296,1064,12433.25,126802.75,139236,1544,0,0,0,,2006-11-04 00:00,,2007-02-27 08:00,2007-08-27 08:01,,2007-01-27 08:00,2007-06-30 17:00,2007-01-27 08:00,2007-06-30 17:00,2006-11-11 08:00,2007-06-30 17:00,,2007-02-27 08:00,2007-08-27 08:01,,PT_Normal,,,,,H0ADoIBvRq+uwmHlAyIikQ,XE9jb6wjD0GEkC7Hq6GEyB,,,N,0,0,,,2007-02-01 02:41,2007-02-04 01:05,hbe4678,hbe4678,2007-01-27 08:00,2007-06-30 17:00,1064
15,12456196,14517,6815809,13329,1,0,N,N,N,CP_Units,TT_Task,DT_FixedDUR2,RV_OK,TK_Active,CK02FP0110,02F A/G Pipe Spool Fabrication,,672.016666666667,0,784,0,0,0,128,0,0,0,,2006-11-10 00:00,,2007-05-05 08:01,2007-08-27 08:01,2007-05-20 17:00,2007-01-27 08:00,2007-05-20 17:00,2007-01-27 08:00,2007-05-20 17:00,2006-12-06 08:00,2006-12-24 17:00,,2007-05-05 08:01,2007-08-27 08:01,,PT_Normal,,,,,UC638RndRKmmy2pAIt5uOQ,48h+zRHBo0SwgKdJnNeVJx,,,N,0,0,,,2007-02-01 02:41,2007-02-04 01:00,hbe4678,hbe4678,2007-01-27 08:00,2007-05-20 17:00,784
16,12456197,14517,6815809,13329,1,0,N,N,N,CP_Units,TT_Task,DT_FixedDUR2,RV_OK,TK_NotStart,CK02GP0110,02G A/G Pipe Spool Fabrication,,920.016666666667,0,240,0,0,0,240,0,0,0,2007-04-14 17:00,,,2007-07-23 08:01,2007-08-27 08:01,,2007-03-11 08:00,2007-04-14 17:00,2007-03-11 08:00,2007-04-14 17:00,2007-03-11 08:00,2007-04-14 17:00,,2007-07-23 08:01,2007-08-27 08:01,CS_MEOA,PT_Normal,,,,,ldRPesYrQAaEhLc/04KsaA,C1iaYTccOUahBo8lCE/EWx,,,N,0,0,,,2007-02-01 02:41,2007-02-04 01:00,hbe4678,hbe4678,2007-03-11 08:00,2007-04-14 17:00,240
17,12456198,14517,6815809,13329,1,0,N,N,N,CP_Units,TT_Task,DT_FixedDUR2,RV_OK,TK_NotStart,CK02JP0110,02J A/G Pipe Spool Fabrication,,888,0,176,0,0,0,176,0,0,0,2007-04-19 08:01,,,2007-08-01 08:01,2007-08-27 08:01,,2007-03-25 08:01,2007-04-19 08:01,2007-03-25 08:01,2007-04-19 08:01,2007-03-25 08:01,2007-04-19 08:01,,2007-08-01 08:01,2007-08-27 08:01,CS_MEOA,PT_Normal,,,,,c6hNJSHcTfSLc1p/CQ1jSA,l+dkfQ37zk2nML97kwPyJx,,,N,0,0,,,2007-02-01 02:41,2007-02-01 02:43,hbe4678,hbe4678,2007-03-25 08:01,2007-04-19 08:01,176
18,12456199,14517,6815809,13329,1,0,N,N,N,CP_Units,TT_Task,DT_FixedDUR2,RV_OK,TK_NotStart,CK02KP0110,02K A/G Pipe Spool Fabrication,,624.016666666667,0,168,0,0,0,168,0,0,0,2007-05-27 17:00,,,2007-08-02 08:01,2007-08-27 08:01,,2007-05-03 08:00,2007-05-27 17:00,2007-05-03 08:00,2007-05-27 17:00,2007-05-03 08:00,2007-05-27 17:00,,2007-08-02 08:01,2007-08-27 08:01,CS_MEOA,PT_Normal,,,,,jTqkVtGMTBmOEbjU20tDKg,Zueg87aDVk6vfeWfqX4OJB,,,N,0,0,,,2007-02-01 02:41,2007-02-04 01:00,hbe4678,hbe4678,2007-05-03 08:00,2007-05-27 17:00,168
19,12456200,14517,6815809,13329,1,0,N,N,N,CP_Units,TT_Task,DT_FixedDUR2,RV_OK,TK_Active,CK01YP0110,01Y A/G Pipe Spool Fabrication,,936,0,232,0,0,0,288,0,0,0,,2006-11-13 00:00,,2007-06-12 08:00,2007-07-15 17:00,2007-02-28 17:00,2007-01-27 08:00,2007-02-28 17:00,2007-01-27 08:00,2007-02-28 17:00,2006-11-18 08:00,2006-12-28 17:00,,2007-06-12 08:00,2007-07-15 17:00,,PT_Normal,,,,,dKSia0FYTSy3L2/2QMcaoQ,Rvu3+nqDp065LIUGoaDS4h,,,N,0,0,,,2007-02-01 02:41,2007-02-01 02:43,hbe4678,hbe4678,2007-01-27 08:00,2007-02-28 17:00,232
20,12456201,14517,6815809,13329,1,0,N,N,N,CP_Units,TT_Task,DT_FixedDUR2,RV_OK,TK_NotStart,CK02MP0110,02M A/G Pipe Spool Fabrication,,760.016666666667,0,120,0,0,0,120,0,0,0,2007-05-07 17:00,,,2007-08-09 08:01,2007-08-27 08:01,,2007-04-21 08:00,2007-05-07 17:00,2007-04-21 08:00,2007-05-07 17:00,2007-04-21 08:00,2007-05-07 17:00,,2007-08-09 08:01,2007-08-27 08:01,CS_MEOA,PT_Normal,,,,,Ws33SQkCSWWE3LjwvDbWFQ,xIr36fXpwUyY5IuvI/A0Dx,,,N,0,0,,,2007-02-01 02:41,2007-02-04 01:00,hbe4678,hbe4678,2007-04-21 08:00,2007-05-07 17:00,120
21,12456202,14517,6815809,13329,1,0,N,N,N,CP_Units,TT_Task,DT_FixedDUR2,RV_OK,TK_Active,CK02NP0110,02N A/G Pipe Spool Fabrication,,832.016666666667,0,624,0,0,0,24,0,0,0,,2006-11-11 00:00,,2007-05-28 08:01,2007-08-27 08:01,2007-04-26 17:00,2007-01-27 08:00,2007-04-26 17:00,2007-01-27 08:00,2007-04-26 17:00,2007-02-17 08:00,2007-02-19 17:00,,2007-05-28 08:01,2007-08-27 08:01,,PT_Normal,,,,,zt/vTzIoStuHi3fAG79BYA,OuUW8bkVCkG15EWTWzuL8R,,,N,0,0,,,2007-02-01 02:41,2007-02-04 01:00,hbe4678,hbe4678,2007-01-27 08:00,2007-04-26 17:00,624
22,12456203,14517,6815809,13329,1,0,N,N,N,CP_Units,TT_Task,DT_FixedDUR2,RV_OK,TK_Active,CK02PP0110,02P A/G Pipe Spool Fabrication,,664.016666666667,0,792,0,0,0,32,0,0,0,,2006-11-14 00:00,,2007-05-03 08:01,2007-08-27 08:01,2007-05-21 17:00,2007-01-27 08:00,2007-05-21 17:00,2007-01-27 08:00,2007-05-21 17:00,2007-01-27 08:00,2007-01-30 17:00,,2007-05-03 08:01,2007-08-27 08:01,,PT_Normal,,,,,HUmlbjl9QxK6Z4UMnsFJYQ,4rH1NDmBUU2Gz5itcxzUox,,,N,0,0,,,2007-02-01 02:41,2007-02-04 01:00,hbe4678,hbe4678,2007-01-27 08:00,2007-05-21 17:00,792
23,12456204,14517,6815809,13329,1,0,N,N,N,CP_Units,TT_Task,DT_FixedDUR2,RV_OK,TK_Active,CK02QP0110,02Q A/G Pipe Spool Fabrication,,720.016666666667,0,640,0,0,0,32,0,0,0,,2006-11-28 00:00,,2007-05-26 08:01,2007-08-27 08:01,2007-05-13 17:00,2007-02-10 08:00,2007-05-13 17:00,2007-02-10 08:00,2007-05-13 17:00,2007-02-03 08:00,2007-02-06 17:00,,2007-05-26 08:01,2007-08-27 08:01,,PT_Normal,,,,,IyPr3JnuTjOrOqFUGJrhaA,XxPe2pdTCUWqErD5M/S4SR,,,N,0,0,,,2007-02-01 02:41,2007-02-04 01:00,hbe4678,hbe4678,2007-02-10 08:00,2007-05-13 17:00,640
24,12456205,14517,6815809,13329,1,0,N,N,N,CP_Units,TT_Task,DT_FixedDUR2,RV_OK,TK_Active,CK02YP0110,02Y A/G Pipe Spool Fabrication,,216,0,232,0,0,0,384,0,0,0,,2006-11-04 00:00,,2007-02-27 08:00,2007-04-01 17:00,2007-02-28 17:00,2007-01-27 08:00,2007-02-28 17:00,2007-01-27 08:00,2007-02-28 17:00,2006-11-11 08:00,2007-01-11 17:00,,2007-02-27 08:00,2007-04-01 17:00,,PT_Normal,,,,,wNbNGe6yS8KFe9GMemRJCA,ZrSwKoBh/EapRg+rVFNZbh,,,N,0,0,,,2007-02-01 02:41,2007-02-01 02:43,hbe4678,hbe4678,2007-01-27 08:00,2007-02-28 17:00,232
25,12456206,14517,6815809,13329,1,0,N,N,N,CP_Units,TT_Task,DT_FixedDUR2,RV_OK,TK_NotStart,CK03AP0110,03A A/G Pipe Spool Fabrication,,1000.01666666667,0,80,0,0,0,80,0,0,0,2007-04-02 17:00,,,2007-08-15 08:01,2007-08-27 08:01,,2007-03-22 08:00,2007-04-02 17:00,2007-03-22 08:00,2007-04-02 17:00,2007-03-22 08:00,2007-04-02 17:00,,2007-08-15 08:01,2007-08-27 08:01,CS_MEOA,PT_Normal,,,,,ctu8CPNVTX+5I+/SpBcnUQ,H41fOcqrrkmtXYjxFmK+0R,,,N,0,0,,,2007-02-01 02:41,2007-02-04 01:00,hbe4678,hbe4678,2007-03-22 08:00,2007-04-02 17:00,80
26,12456207,14517,6815809,13329,1,0,N,N,N,CP_Units,TT_Task,DT_FixedDUR2,RV_OK,TK_NotStart,CK03BP0110,03B A/G Pipe Spool Fabrication,,752.016666666667,0,80,0,0,0,80,0,0,0,2007-05-08 17:00,,,2007-08-15 08:01,2007-08-27 08:01,,2007-04-28 08:00,2007-05-08 17:00,2007-04-28 08:00,2007-05-08 17:00,2007-04-28 08:00,2007-05-08 17:00,,2007-08-15 08:01,2007-08-27 08:01,CS_MEOA,PT_Normal,,,,,JXlgq21lR82HXrV0uqNAyA,H41fOcqrrkmtXYjxFmK+0R,,,N,0,0,,,2007-02-01 02:41,2007-02-04 01:00,hbe4678,hbe4678,2007-04-28 08:00,2007-05-08 17:00,80
27,12456208,14517,6815809,13329,1,0,N,N,N,CP_Units,TT_Task,DT_FixedDUR2,RV_OK,TK_Active,CK03CP0110,03C A/G Pipe Spool Fabrication,,1096.01666666667,0,360,0,0,0,80,0,0,0,,2006-11-14 00:00,,2007-07-05 08:01,2007-08-27 08:01,2007-03-19 17:00,2007-01-27 08:00,2007-03-19 17:00,2007-01-27 08:00,2007-03-19 17:00,2006-12-20 08:00,2007-01-07 17:00,,2007-07-05 08:01,2007-08-27 08:01,,PT_Normal,,,,,PlF57kj3Tbim7LpYKkiy3Q,PmZYJoGgKkKhwQO42YV21x,,,N,0,0,,,2007-02-01 02:41,2007-02-04 01:00,hbe4678,hbe4678,2007-01-27 08:00,2007-03-19 17:00,360
28,12456209,14517,6815809,13329,1,0,N,N,N,CP_Units,TT_Task,DT_FixedDUR2,RV_OK,TK_NotStart,CK03DP0110,03D A/G Pipe Spool Fabrication,,992.016666666667,0,40,0,0,0,40,0,0,0,2007-04-03 17:00,,,2007-08-21 08:01,2007-08-27 08:01,,2007-03-29 08:00,2007-04-03 17:00,2007-03-29 08:00,2007-04-03 17:00,2007-03-29 08:00,2007-04-03 17:00,,2007-08-21 08:01,2007-08-27 08:01,CS_MEOA,PT_Normal,,,,,7R2IGQAWTC6bAbeRm3/1Wg,U5+2vs6zQE+ouxvUmUgieh,,,N,0,0,,,2007-02-01 02:41,2007-02-04 01:00,hbe4678,hbe4678,2007-03-29 08:00,2007-04-03 17:00,40
29,12456210,14517,6815809,13329,1,0,N,N,N,CP_Units,TT_Task,DT_FixedDUR2,RV_OK,TK_NotStart,CK03EP0110,03E A/G Pipe Spool Fabrication,,1008.01666666667,0,128,0,0,0,128,0,0,0,2007-04-01 17:00,,,2007-08-08 08:01,2007-08-27 08:01,,2007-03-14 08:00,2007-04-01 17:00,2007-03-14 08:00,2007-04-01 17:00,2007-03-14 08:00,2007-04-01 17:00,,2007-08-08 08:01,2007-08-27 08:01,CS_MEOA,PT_Normal,,,,,pjr0hCCfQsqFEXMl5sg3PA,l4yDUrCzakyXxxpnfSPeAh,,,N,0,0,,,2007-02-01 02:41,2007-02-04 01:00,hbe4678,hbe4678,2007-03-14 08:00,2007-04-01 17:00,128
30,12456211,14517,6815809,13329,1,0,N,N,N,CP_Units,TT_Task,DT_FixedDUR2,RV_OK,TK_Active,CK03YP0110,03Y A/G Pipe Spool Fabrication,,640,0,288,0,0,0,384,0,0,0,,2006-12-09 00:00,,2007-04-30 08:00,2007-06-10 17:00,2007-03-08 17:00,2007-01-27 08:00,2007-03-08 17:00,2007-01-27 08:00,2007-03-08 17:00,2006-12-06 08:00,2007-02-06 17:00,,2007-04-30 08:00,2007-06-10 17:00,,PT_Normal,,,,,64/M/qjVR/qmwuDPJMKU+A,UOuS0j9kTEK1pgfJDxxF/x,,,N,0,0,,,2007-02-01 02:41,2007-02-01 02:43,hbe4678,hbe4678,2007-01-27 08:00,2007-03-08 17:00,288
31,12456212,14517,6815809,13329,1,0,N,N,N,CP_Units,TT_Task,DT_FixedDUR2,RV_OK,TK_Active,CK01BP0110,01B A/G Pipe Spool Fabrication,,808,0,568,0,0,0,160,0,0,0,,2006-12-24 00:00,,2007-05-28 08:00,2007-08-18 17:00,2007-04-22 17:00,2007-01-30 08:00,2007-04-22 17:00,2007-01-30 08:00,2007-04-22 17:00,2007-01-30 08:00,2007-02-21 17:00,,2007-05-28 08:00,2007-08-18 17:00,,PT_Normal,,,,,DOL5/zfYTqWjk8m68b1SBg,HszBl6c/HEuDuFerjkhLdx,,,N,0,0,,,2007-02-01 02:41,2007-02-01 02:43,hbe4678,hbe4678,2007-01-30 08:00,2007-04-22 17:00,568
32,12456213,14517,6815809,13329,1,100,N,N,N,CP_Units,TT_Task,DT_FixedDUR2,RV_OK,TK_Complete,CK01AP0110,01A A/G Pipe Spool Fabrication,,,,0,0,0,0,48,0,0,0,,2006-12-18 00:00,2007-01-26 00:00,2007-08-27 08:01,2007-08-27 08:01,,2007-01-27 08:00,2007-01-27 08:00,,,2007-01-06 08:00,2007-01-11 17:00,,,,,PT_Normal,,,,,TqKRoa0NTfq2F9NpX01ECw,T4L9PaGJE0ufdEMp108mVB,,,N,0,0,,,2007-02-01 02:41,2007-02-04 01:05,hbe4678,hbe4678,,,0
33,12456214,14517,6815809,13329,1,0,N,N,N,CP_Units,TT_Task,DT_FixedDUR2,RV_OK,TK_NotStart,CK01CP0110,01C A/G Pipe Spool Fabrication,,984,0,48,0,0,0,48,0,0,0,2007-04-05 08:00,,,2007-08-20 08:01,2007-08-27 08:01,,2007-03-29 08:01,2007-04-05 08:01,2007-03-29 08:01,2007-04-05 08:01,2007-03-29 08:01,2007-04-05 08:01,,2007-08-20 08:01,2007-08-27 08:01,CS_MEOA,PT_Normal,,,,,Vhwx4Dp5TAqk8mbCapOe5Q,r2Y2t9oyaEaC5gGz+Ngadx,,,N,0,0,,,2007-02-01 02:41,2007-02-01 02:43,hbe4678,hbe4678,2007-03-29 08:01,2007-04-05 08:01,48
34,12456215,14517,6815809,13329,1,0,N,N,N,CP_Units,TT_Task,DT_FixedDUR2,RV_OK,TK_Active,CK01DP0110,01D A/G Pipe Spool Fabrication,,832.016666666667,0,584,0,0,0,128,0,0,0,,2006-12-19 00:00,,2007-05-28 08:01,2007-08-21 08:01,2007-04-21 17:00,2007-01-27 08:00,2007-04-21 17:00,2007-01-27 08:00,2007-04-21 17:00,2007-01-23 08:00,2007-02-10 17:00,,2007-05-28 08:01,2007-08-21 08:01,,PT_Normal,,,,,vw+CmM8UT+efhWYy/9vbzQ,svqCnpS6lEaMlGQD9puPfB,,,N,0,0,,,2007-02-01 02:41,2007-02-04 01:00,hbe4678,hbe4678,2007-01-27 08:00,2007-04-21 17:00,584
35,12456216,14517,6815809,13329,1,0,N,N,N,CP_Units,TT_Task,DT_FixedDUR2,RV_OK,TK_NotStart,CK02LP0110,02L A/G Pipe Spool Fabrication,,256.016666666667,0,352,0,0,0,352,0,0,0,2007-06-21 17:00,,,2007-06-09 08:01,2007-07-30 08:01,,2007-05-02 08:00,2007-06-21 17:00,2007-05-02 08:00,2007-06-21 17:00,2007-05-02 08:00,2007-06-21 17:00,,2007-06-09 08:01,2007-07-30 08:01,CS_MEOA,PT_Normal,,,,,VvhWb9qMT5Ot2HbBsptZBw,,,,N,0,0,,,2007-02-01 02:41,2007-02-04 01:00,hbe4678,hbe4678,2007-05-02 08:00,2007-06-21 17:00,352
36,12456217,14517,6815809,13329,1,0,N,N,N,CP_Units,TT_Task,DT_FixedDUR2,RV_OK,TK_NotStart,CK02AP0110,02A A/G Pipe Spool Fabrication,,424.016666666667,0,152,0,0,0,152,0,0,0,2007-06-25 17:00,,,2007-08-05 08:01,2007-08-27 08:01,,2007-06-04 08:00,2007-06-25 17:00,2007-06-04 08:00,2007-06-25 17:00,2007-06-04 08:00,2007-06-25 17:00,,2007-08-05 08:01,2007-08-27 08:01,CS_MEOA,PT_Normal,,,,,5HquBs6gR0icSCmABMdwbQ,Rvu3+nqDp065LIUGoaDS4h,,,N,0,0,,,2007-02-01 02:41,2007-02-04 01:00,hbe4678,hbe4678,2007-06-04 08:00,2007-06-25 17:00,152
37,12456218,14517,6815809,13329,1,0,N,N,N,CP_Units,TT_Task,DT_FixedDUR2,RV_OK,TK_NotStart,CK03FP0110,03F A/G Pipe Spool Fabrication,,1056.01666666667,0,80,0,0,0,80,0,0,0,2007-03-25 17:00,,,2007-08-15 08:01,2007-08-27 08:01,,2007-03-14 08:00,2007-03-25 17:00,2007-03-14 08:00,2007-03-25 17:00,2007-03-14 08:00,2007-03-25 17:00,,2007-08-15 08:01,2007-08-27 08:01,CS_MEOA,PT_Normal,,,,,2WiuMj0kR8GevTvwGQcLRQ,/EF/n+1h3kq3nO1iULvqjB,,,N,0,0,,,2007-02-01 02:41,2007-02-04 01:00,hbe4678,hbe4678,2007-03-14 08:00,2007-03-25 17:00,80
38,12456219,14517,6815809,13329,1,0,N,N,N,CP_Units,TT_Task,DT_FixedDUR2,RV_OK,TK_Active,CK02BP0110,02B A/G Pipe Spool Fabrication,,440.016666666667,0,1016,0,0,0,48,0,0,0,,2006-11-14 00:00,,2007-04-01 08:01,2007-08-27 08:01,2007-06-23 17:00,2007-01-27 08:00,2007-06-23 17:00,2007-01-27 08:00,2007-06-23 17:00,2006-12-02 08:00,2006-12-07 17:00,,2007-04-01 08:01,2007-08-27 08:01,,PT_Normal,,,,,q4/vRFj6RDuIjJmdoaBnng,6lNlnqA0FEWDahEYhO+9gx,,,N,0,0,,,2007-02-01 02:41,2007-02-04 01:00,hbe4678,hbe4678,2007-01-27 08:00,2007-06-23 17:00,1016
39,12456220,14517,6815809,13329,1,0,N,N,N,CP_Units,TT_Task,DT_FixedDUR2,RV_OK,TK_Active,CK02DP0110,02D A/G Pipe Spool Fabrication,,600.016666666667,0,856,0,0,0,104,0,0,0,,2006-11-12 00:00,,2007-04-24 08:01,2007-08-27 08:01,2007-05-30 17:00,2007-01-27 08:00,2007-05-30 17:00,2007-01-27 08:00,2007-05-30 17:00,2006-12-02 08:00,2006-12-16 17:00,,2007-04-24 08:01,2007-08-27 08:01,,PT_Normal,,,,,Ssd+URggSx6mC8opu7ON0g,bamS6/uui0W0ulO7lbnJUB,,,N,0,0,,,2007-02-01 02:41,2007-02-04 01:00,hbe4678,hbe4678,2007-01-27 08:00,2007-05-30 17:00,856
40,12456221,14517,6815809,13329,1,0,N,N,N,CP_Units,TT_Task,DT_FixedDUR2,RV_OK,TK_Active,CK02EP0110,02E A/G Pipe Spool Fabrication,,1040.01666666667,0,416,0,0,0,144,0,0,0,,2006-12-02 00:00,,2007-06-27 08:01,2007-08-27 08:01,2007-03-27 17:00,2007-01-27 08:00,2007-03-27 17:00,2007-01-27 08:00,2007-03-27 17:00,2006-11-29 08:00,2006-12-19 17:00,,2007-06-27 08:01,2007-08-27 08:01,,PT_Normal,,,,,pzntSINsRKq3L0rZJAlCVQ,MblzGgoBBU6zCZTWER0ldx,,,N,0,0,,,2007-02-01 02:41,2007-02-04 01:00,hbe4678,hbe4678,2007-01-27 08:00,2007-03-27 17:00,416
41,12456222,14517,6815810,13329,1,100,N,N,N,CP_Units,TT_Task,DT_FixedDUR2,RV_OK,TK_Complete,CK03EU4110,03E U/G Pipe Spool Fabrication,,,,0,0,0,0,144,0,0,0,,2006-11-16 00:00,2007-01-25 00:00,2007-06-17 08:00,2007-06-17 08:00,,2007-01-27 08:00,2007-01-27 08:00,,,2006-12-02 08:00,2006-12-21 17:00,,,,,PT_Normal,,,,,OZRQ7YEdS66aw3MJT0PoqQ,P0JnogHk4k2RAfhaq6gBPh,,,N,0,0,,,2007-02-01 02:41,2007-02-04 01:05,hbe4678,hbe4678,,,0
42,12456223,14517,6815810,13329,1,100,N,N,N,CP_Units,TT_Task,DT_FixedDUR2,RV_OK,TK_Complete,CK01BU4110,01B U/G Pipe Spool Fabrication,,,,0,0,0,0,80,0,0,0,,2006-11-16 00:00,2007-01-25 00:00,2007-08-16 08:01,2007-08-16 08:01,,2007-01-27 08:00,2007-01-27 08:00,,,2006-12-11 08:00,2006-12-21 17:00,,,,,PT_Normal,,,,,7vsY/dfuTguvsQXclnmqZQ,DBx91EXN0UqgRAxEnshK9R,,,N,0,0,,,2007-02-01 02:41,2007-02-04 01:05,hbe4678,hbe4678,,,0
43,12456224,14517,6815810,13329,1,100,N,N,N,CP_Units,TT_Task,DT_FixedDUR2,RV_OK,TK_Complete,CK01CU4110,01C U/G Pipe Spool Fabrication,,,,0,0,0,0,48,0,0,0,,2006-11-16 00:00,2007-01-25 00:00,2007-08-23 08:01,2007-08-23 08:01,,2007-01-27 08:00,2007-01-27 08:00,,,2006-12-16 08:00,2006-12-21 17:00,,,,,PT_Normal,,,,,SqEl/nEORKewpB+fvaLAfA,irEaO8LCJUS0r3IiC4qi/h,,,N,0,0,,,2007-02-01 02:41,2007-02-04 01:05,hbe4678,hbe4678,,,0
44,12456225,14517,6815810,13329,1,100,N,N,N,CP_Units,TT_Task,DT_FixedDUR2,RV_OK,TK_Complete,CK01DU4110,01D U/G Pipe Spool Fabrication,,,,0,0,0,0,64,0,0,0,,2006-11-16 00:00,2007-01-25 00:00,2007-03-25 08:01,2007-03-25 08:01,,2007-01-27 08:00,2007-01-27 08:00,,,2006-12-14 08:00,2006-12-23 17:00,,,,,PT_Normal,,,,,25K7w0u7TNODxaGoGxLbJQ,/8PBfh7PJUugGdETdGRjSB,,,N,0,0,,,2007-02-01 02:41,2007-02-04 01:05,hbe4678,hbe4678,,,0
45,12456226,14517,6815810,13329,1,100,N,N,N,CP_Units,TT_Task,DT_FixedDUR2,RV_OK,TK_Complete,CK05AU4110,05A U/G Pipe Spool Fabrication,,,,0,0,0,0,104,0,0,0,,2006-11-16 00:00,2007-01-25 00:00,2007-08-07 08:01,2007-08-07 08:01,,2007-01-27 08:00,2007-01-27 08:00,,,2006-12-16 08:00,2007-01-06 17:00,,,,,PT_Normal,,,,,1jeedkZ+Sze+wkd2cQyhvg,D1Oyg/gK+EqpE9J/6yc3aR,,,N,0,0,,,2007-02-01 02:41,2007-02-04 01:05,hbe4678,hbe4678,,,0
46,12456227,14517,6815810,13329,1,100,N,N,N,CP_Units,TT_Task,DT_FixedDUR2,RV_OK,TK_Complete,CK02HU4110,02H U/G Pipe Spool Fabrication,,,,0,0,0,0,128,0,0,0,,2006-10-04 00:00,2007-01-25 00:00,2007-07-28 08:01,2007-07-28 08:01,,2007-01-27 08:00,2007-01-27 08:00,,,2006-11-20 08:00,2006-12-07 17:00,,,,,PT_Normal,,,,,ZmrJ8OA8R2iEJenGxGvZlQ,EF19xkeUuUSAxcKg87Mhah,,,N,0,0,,,2007-02-01 02:41,2007-02-04 01:05,hbe4678,hbe4678,,,0
47,12456228,14517,6815810,13329,1,100,N,N,N,CP_Units,TT_Task,DT_FixedDUR2,RV_OK,TK_Complete,CK02CU4110,02C U/G Pipe Spool Fabrication,,,,0,0,0,0,128,0,0,0,,2006-09-16 00:00,2007-01-25 00:00,2007-08-04 08:01,2007-08-04 08:01,,2007-01-27 08:00,2007-01-27 08:00,,,2006-11-04 08:00,2006-11-21 17:00,,,,,PT_Normal,,,,,G2HUzg75QZargG6pr+lzCw,ajWs1wDnB0m6bF9J0wf9EB,,,N,0,0,,,2007-02-01 02:41,2007-02-04 01:05,hbe4678,hbe4678,,,0
48,12456229,14517,6815810,13329,0,100,N,N,N,CP_Units,TT_Mile,DT_FixedDrtn,RV_OK,TK_Complete,CK000U4110,Start Pipe Fab,,,,0,0,0,0,0,0,0,0,,2006-09-16 08:00,2006-09-16 08:00,2007-02-27 08:00,2007-02-27 08:00,,2007-01-27 08:00,2007-01-27 08:00,,,2006-09-16 08:00,2006-09-16 08:00,,,,,PT_Normal,,,,,pHUwaw6YTriBV00/rDjlQA,nylzLyTv3E+UbKkLCXpWlx,,,N,0,0,,,2007-02-01 02:41,2007-02-04 01:05,hbe4678,hbe4678,,,0
49,12456230,14517,6815810,13329,1,100,N,N,N,CP_Units,TT_Task,DT_FixedDUR2,RV_OK,TK_Complete,CK02UU4110,02U U/G Pipe Spool Fabrication (CW & Misc Headers),,,,0,0,0,0,144,0,0,0,,2006-09-16 00:00,2006-11-05 00:00,2007-04-19 08:00,2007-04-19 08:00,,2007-01-27 08:00,2007-01-27 08:00,,,2006-09-09 08:00,2006-10-04 17:00,,,,,PT_Normal,,,,,VAIWGDStQZO336r7t5QYTA,0YaUtti240mn5LyYqAQcWh,,,N,0,0,,,2007-02-01 02:41,2007-02-04 01:05,hbe4678,hbe4678,,,0
50,12456231,14517,6815810,13329,1,100,N,N,N,CP_Units,TT_Task,DT_FixedDUR2,RV_OK,TK_Complete,CK01EU4120,01E/F/G U/G Pipe Spool Fabrication (to Blg Stub Outs),,,,0,0,0,0,144,0,0,0,,2006-11-16 00:00,2007-01-25 00:00,2007-08-20 08:00,2007-08-20 08:00,,2007-01-27 08:00,2007-01-27 08:00,,,2006-12-02 08:00,2006-12-21 17:00,,,,,PT_Normal,,,,,2cdA4yfTSNGFrLmUUpcOEg,2azHvVjPckW43C3lxqS+XB,,,N,0,0,,,2007-02-01 02:41,2007-02-04 01:05,hbe4678,hbe4678,,,0
51,12456232,14517,6815810,13329,1,100,N,N,N,CP_Units,TT_WBS,DT_FixedDUR2,RV_OK,TK_Complete,WK000U4100,000 U/G Pipe Spool Fabrication,1342,,,0,9960.66,0,10408.22,632,0,0,0,,2006-09-16 00:00,2007-01-25 00:00,,,,,,,,2006-09-09 08:00,2007-01-06 17:00,,,,,PT_Normal,,,,,vW5yd3odRKiyXC3y5CSd7w,JKGLq+RqLkyf8k4ClycL6A,,,N,0,0,,,2007-02-01 02:41,2007-02-04 01:05,hbe4678,hbe4678,,,0
52,12456233,14517,6815810,13329,1,100,N,N,N,CP_Units,TT_Task,DT_FixedDUR2,RV_OK,TK_Complete,CK03FU4110,03F U/G Pipe Spool Fabrication,,,,0,0,0,0,40,0,0,0,,2006-11-16 00:00,2007-01-25 00:00,2007-07-26 08:01,2007-07-26 08:01,,2007-01-27 08:00,2007-01-27 08:00,,,2006-12-17 08:00,2006-12-21 17:00,,,,,PT_Normal,,,,,t1H2U5EySyK9P5fgUYv9IQ,pgM8ujdIkUa1tW4sgRmZyh,,,N,0,0,,,2007-02-01 02:41,2007-02-04 01:05,hbe4678,hbe4678,,,0
53,12456234,14517,6815810,13329,1,100,N,N,N,CP_Units,TT_Task,DT_FixedDUR2,RV_OK,TK_Complete,CK02LU4110,02L U/G Pipe Spool Fabrication,,,,0,0,0,0,144,0,0,0,,2006-12-02 08:00,2007-01-25 00:00,2007-06-19 08:01,2007-06-19 08:01,,2007-01-27 08:00,2007-01-27 08:00,,,2006-12-02 08:00,2006-12-21 17:00,,,,,PT_Normal,,,,,ERtit6seS52bd4+251y5Vg,,,,N,0,0,,,2007-02-01 02:41,2007-02-04 01:05,hbe4678,hbe4678,,,0
54,12456235,14517,6815810,13329,1,100,N,N,N,CP_Units,TT_Task,DT_FixedDUR2,RV_OK,TK_Complete,CK02AU4110,02A U/G Pipe Spool Fabrication,,,,0,0,0,0,72,0,0,0,,2006-09-16 00:00,2006-11-05 00:00,2007-11-04 08:01,2007-11-04 08:01,,2007-01-27 08:00,2007-01-27 08:00,,,2006-10-28 08:00,2006-11-06 17:00,,,,,PT_Normal,,,,,BZKjAChFRGSgK8QF/M+ZwA,ajWs1wDnB0m6bF9J0wf9EB,,,N,0,0,,,2007-02-01 02:41,2007-02-04 01:05,hbe4678,hbe4678,,,0
55,12456236,14517,6815810,13329,1,100,N,N,N,CP_Units,TT_Task,DT_FixedDUR2,RV_OK,TK_Complete,CK02BU4110,02B U/G Pipe Spool Fabrication,,,,0,0,0,0,24,0,0,0,,2006-09-16 00:00,2006-09-19 00:00,2007-10-31 08:01,2007-10-31 08:01,,2007-01-27 08:00,2007-01-27 08:00,,,2006-10-30 08:00,2006-11-01 17:00,,,,,PT_Normal,,,,,72nQUtC8R1GCqW0iXPq17g,CSUAFtN7zUe5mQNfSRGD6h,,,N,0,0,,,2007-02-01 02:41,2007-02-04 01:05,hbe4678,hbe4678,,,0
56,12456237,14517,6815810,13329,1,100,N,N,N,CP_Units,TT_Task,DT_FixedDUR2,RV_OK,TK_Complete,CK02DU4110,02D U/G Pipe Spool Fabrication,,,,0,0,0,0,48,0,0,0,,2006-09-16 00:00,2007-01-25 00:00,2007-08-28 08:01,2007-08-28 08:01,,2007-01-27 08:00,2007-01-27 08:00,,,2006-11-08 08:00,2006-11-14 17:00,,,,,PT_Normal,,,,,/TmebpqDTEqGxcPwrPJMfw,kkvYyft5sUCom0kob6h/Rh,,,N,0,0,,,2007-02-01 02:41,2007-02-04 01:05,hbe4678,hbe4678,,,0
57,12456238,14517,6815810,13329,1,100,N,N,N,CP_Units,TT_Task,DT_FixedDUR2,RV_OK,TK_Complete,CK02EU4110,02E U/G Pipe Spool Fabrication,,,,0,0,0,0,64,0,0,0,,2006-09-16 00:00,2007-01-25 00:00,2007-08-28 08:01,2007-08-28 08:01,,2007-01-27 08:00,2007-01-27 08:00,,,2006-11-11 08:00,2006-11-19 17:00,,,,,PT_Normal,,,,,ADNWadk6QW+28NtM8GDZiQ,D5y3hyPEgEqy/+Nczvaa3R,,,N,0,0,,,2007-02-01 02:41,2007-02-04 01:05,hbe4678,hbe4678,,,0
58,12456239,14517,6815810,13329,1,100,N,N,N,CP_Units,TT_Task,DT_FixedDUR2,RV_OK,TK_Complete,CK02FU4110,02F U/G Pipe Spool Fabrication,,,,0,0,0,0,64,0,0,0,,2006-11-05 00:00,2007-01-25 00:00,2007-08-28 08:01,2007-08-28 08:01,,2007-01-27 08:00,2007-01-27 08:00,,,2006-11-18 08:00,2006-11-26 17:00,,,,,PT_Normal,,,,,/4lPvjyuQMyCvXtgF/yLnA,3UuoPyMgNESe+bF3cim8FR,,,N,0,0,,,2007-02-01 02:41,2007-02-04 01:05,hbe4678,hbe4678,,,0
59,12456240,14517,6815810,13329,1,100,N,N,N,CP_Units,TT_Task,DT_FixedDUR2,RV_OK,TK_Complete,CK02GU4110,02G U/G Pipe Spool Fabrication,,,,0,0,0,0,112,0,0,0,,2006-11-05 00:00,2006-12-27 00:00,2007-09-26 08:01,2007-09-26 08:01,,2007-01-27 08:00,2007-01-27 08:00,,,2006-11-22 08:00,2006-12-07 17:00,,,,,PT_Normal,,,,,VWPG15iRQcWzSreMig2D6A,x7BI/Ik8T0iDFl+QhLKkqx,,,N,0,0,,,2007-02-01 02:41,2007-02-04 01:05,hbe4678,hbe4678,,,0
60,12456241,14517,6815810,13329,1,100,N,N,N,CP_Units,TT_Task,DT_FixedDUR2,RV_OK,TK_Complete,CK02JU4110,02J U/G Pipe Spool Fabrication,,,,0,0,0,0,80,0,0,0,,2006-10-18 00:00,2006-11-05 00:00,2007-11-25 08:01,2007-11-25 08:01,,2007-01-27 08:00,2007-01-27 08:00,,,2006-11-15 08:00,2006-11-26 17:00,,,,,PT_Normal,,,,,9ygFBt0ZTuWvj6ip9NE6zA,h58fPsbhxEqJEDYI//d/JB,,,N,0,0,,,2007-02-01 02:41,2007-02-04 01:05,hbe4678,hbe4678,,,0
61,12456242,14517,6815810,13329,1,100,N,N,N,CP_Units,TT_Task,DT_FixedDUR2,RV_OK,TK_Complete,CK02KU4110,02K U/G Pipe Spool Fabrication,,,,0,0,0,0,80,0,0,0,,2006-10-18 00:00,2007-01-25 00:00,2007-08-28 08:01,2007-08-28 08:01,,2007-01-27 08:00,2007-01-27 08:00,,,2006-11-13 08:00,2006-11-23 17:00,,,,,PT_Normal,,,,,AjTkkskUQMKd3bY2GbzOdQ,NvPlpCLtW0OMetN+m9TQeR,,,N,0,0,,,2007-02-01 02:41,2007-02-04 01:05,hbe4678,hbe4678,,,0
62,12456243,14517,6815810,13329,1,100,N,N,N,CP_Units,TT_Task,DT_FixedDUR2,RV_OK,TK_Complete,CK02MU4110,02M U/G Pipe Spool Fabrication,,,,0,0,0,0,56,0,0,0,,2006-10-18 00:00,2006-11-05 00:00,2007-12-03 08:01,2007-12-03 08:01,,2007-01-27 08:00,2007-01-27 08:00,,,2006-11-11 08:00,2006-11-18 17:00,,,,,PT_Normal,,,,,kX3uc3vxQFOIHiPbgaov7A,GQwvcIjPtUySKCIyhWTnWh,,,N,0,0,,,2007-02-01 02:41,2007-02-04 01:05,hbe4678,hbe4678,,,0
63,12456244,14517,6815810,13329,1,100,N,N,N,CP_Units,TT_Task,DT_FixedDUR2,RV_OK,TK_Complete,CK03AU4110,03A U/G Pipe Spool Fabrication,,,,0,0,0,0,40,0,0,0,,2006-11-16 00:00,2007-01-25 00:00,2007-07-03 08:00,2007-07-03 08:00,,2007-01-27 08:00,2007-01-27 08:00,,,2006-12-17 08:00,2006-12-21 17:00,,,,,PT_Normal,,,,,yLO0vgvoRVGbOWO/dovqwg,edI3Cf1bNE+ktOp/7Pe6fh,,,N,0,0,,,2007-02-01 02:41,2007-02-04 01:05,hbe4678,hbe4678,,,0
64,12456245,14517,6815810,13329,1,100,N,N,N,CP_Units,TT_Task,DT_FixedDUR2,RV_OK,TK_Complete,CK03BU4110,03B U/G Pipe Spool Fabrication,,,,0,0,0,0,40,0,0,0,,2006-11-16 00:00,2007-01-25 00:00,2007-08-28 08:01,2007-08-28 08:01,,2007-01-27 08:00,2007-01-27 08:00,,,2006-12-14 08:01,2006-12-20 08:01,,,,,PT_Normal,,,,,SbjU3lvNRQ6VTQzIphT0MQ,edI3Cf1bNE+ktOp/7Pe6fh,,,N,0,0,,,2007-02-01 02:41,2007-02-04 01:05,hbe4678,hbe4678,,,0
65,12456246,14517,6815810,13329,1,100,N,N,N,CP_Units,TT_Task,DT_FixedDUR2,RV_OK,TK_Complete,CK03CU4110,03C U/G Pipe Spool Fabrication,,,,0,0,0,0,40,0,0,0,,2006-11-16 00:00,2007-01-25 00:00,2007-08-08 08:00,2007-08-08 08:00,,2007-01-27 08:00,2007-01-27 08:00,,,2006-12-17 08:00,2006-12-21 17:00,,,,,PT_Normal,,,,,B2T8+p5VRnK6Pj572GXGoA,a0yOE1ipXUauVmv/4BV4jB,,,N,0,0,,,2007-02-01 02:41,2007-02-04 01:05,hbe4678,hbe4678,,,0
66,12456247,14517,6815810,13329,1,100,N,N,N,CP_Units,TT_Task,DT_FixedDUR2,RV_OK,TK_Complete,CK03DU4110,03D U/G Pipe Spool Fabrication,,,,0,0,0,0,24,0,0,0,,2006-11-16 00:00,2007-01-25 00:00,2007-08-28 08:01,2007-08-28 08:01,,2007-01-27 08:00,2007-01-27 08:00,,,2006-12-09 08:00,2006-12-11 17:00,,,,,PT_Normal,,,,,qaVShQzPQQyNHIUUer2RSw,W5Xk26MIT0Gve9HZSoEClh,,,N,0,0,,,2007-02-01 02:41,2007-02-04 01:05,hbe4678,hbe4678,,,0
67,12456248,14517,6815813,13329,1,0,N,N,N,CP_Units,TT_Task,DT_FixedDUR2,RV_OK,TK_Active,CO01BM0130,01B Tank Erection 2001-FA (Water Storage Tank),,72.0166666666667,0,792,0,0,0,1040,0,0,0,,2006-08-29 00:00,,2007-02-06 08:01,2007-06-02 08:01,2007-05-21 17:00,2007-01-27 08:00,2007-05-21 17:00,2007-01-27 08:00,2007-05-21 17:00,2006-08-26 08:00,2007-02-20 17:00,,2007-02-06 08:01,2007-06-02 08:01,,PT_Normal,,,,,MTM10sD2SnW/q7NlZ/wsow,Iyv8pj3qZE2rcU3JtOWuoB,,,N,0,0,,,2007-02-01 02:41,2007-02-04 01:00,hbe4678,hbe4678,2007-01-27 08:00,2007-05-21 17:00,792
68,12456249,14517,6815813,13329,1,0,N,N,N,CP_Units,TT_Task,DT_FixedDUR2,RV_OK,TK_Active,CO01BM0140,01B Tank Erection 2001-FB (Water Storage Tank),,256.016666666667,0,608,0,0,0,1040,0,0,0,,2006-08-29 00:00,,2007-03-05 08:01,2007-06-02 08:01,2007-04-24 17:00,2007-01-27 08:00,2007-04-24 17:00,2007-01-27 08:00,2007-04-24 17:00,2006-08-30 08:00,2007-02-25 17:00,,2007-03-05 08:01,2007-06-02 08:01,,PT_Normal,,,,,F3ZsOiTrTAGMZQiymJObZQ,vMrgDHvG3UW5j9Np2X+DiB,,,N,0,0,,,2007-02-01 02:41,2007-02-04 01:00,hbe4678,hbe4678,2007-01-27 08:00,2007-04-24 17:00,608
69,12456250,14517,6815813,13329,1,0,N,N,N,CP_Units,TT_WBS,DT_FixedDUR2,RV_OK,TK_Active,WT010M0100,010 Tank Erection,1347,72.0166666666667,4568,792,73794,44365.78,118159.78,1072,0,0,0,,2006-08-29 00:00,,2007-02-06 08:01,2007-06-02 08:01,,2007-01-27 08:00,2007-05-21 17:00,2007-01-27 08:00,2007-05-21 17:00,2006-08-26 08:00,2007-02-25 17:00,,2007-02-06 08:01,2007-06-02 08:01,,PT_Normal,,,,,MhbQnjAeR7eZQHFLHudlXA,T4wIHTzsLEuKAFjJ1fTI8B,,,N,0,0,,,2007-02-01 02:41,2007-02-04 01:05,hbe4678,hbe4678,2007-01-27 08:00,2007-05-21 17:00,792
70,12456251,14517,6815815,13329,1,0,N,N,N,CP_Units,TT_Task,DT_FixedDUR2,RV_OK,TK_Active,CO02KM0130,02K Tank Erection 114-F (Benfield Solution Tank),,776.016666666667,0,88,0,0,0,264,0,0,0,,2006-09-16 00:00,,2007-05-20 08:01,2007-06-02 08:01,2007-02-07 17:00,2007-01-27 08:00,2007-02-07 17:00,2007-01-27 08:00,2007-02-07 17:00,2006-09-16 08:00,2006-11-13 17:00,,2007-05-20 08:01,2007-06-02 08:01,,PT_Normal,,,,,xTYhmEyUTBKNMB44uEujeA,fG4PKfLm5kmdZhLVFJptLB,,,N,0,0,,,2007-02-01 02:41,2007-02-04 01:00,hbe4678,hbe4678,2007-01-27 08:00,2007-02-07 17:00,88
71,12456252,14517,6815815,13329,1,0,N,N,N,CP_Units,TT_WBS,DT_FixedDUR2,RV_OK,TK_Active,WT020M0100,020 Tank Erection,1347,776.016666666667,5272,88,2023.2,388.22,2411.42,264,0,0,0,,2006-09-16 00:00,,2007-05-20 08:01,2007-06-02 08:01,,2007-01-27 08:00,2007-02-07 17:00,2007-01-27 08:00,2007-02-07 17:00,2006-09-16 08:00,2006-11-13 17:00,,2007-05-20 08:01,2007-06-02 08:01,,PT_Normal,,,,,cxzmeBXUTx6emp4n4p81vA,oDmTDIGqhUW/tqxWepHSSR,,,N,0,0,,,2007-02-01 02:41,2007-02-04 01:05,hbe4678,hbe4678,2007-01-27 08:00,2007-02-07 17:00,88
72,12456253,14517,6815817,13329,1,0,N,N,N,CP_Units,TT_Task,DT_FixedDUR2,RV_OK,TK_Active,CO03DM0145,03D Tank Erection 2002-F (Demin Water Tank),,840.016666666667,0,112,0,0,0,560,0,0,0,,2006-08-29 00:00,,2007-05-29 08:01,2007-06-14 08:01,2007-02-11 17:00,2007-01-27 08:00,2007-02-11 17:00,2007-01-27 08:00,2007-02-11 17:00,2006-08-30 08:00,2006-12-10 17:00,,2007-05-29 08:01,2007-06-14 08:01,,PT_Normal,,,,,WGvSRVYFQs2eCwUA8fMIew,eR5YBEQf20CMKRaqqwaBWR,,,N,0,0,,,2007-02-01 02:41,2007-02-04 01:00,hbe4678,hbe4678,2007-01-27 08:00,2007-02-11 17:00,112
73,12456254,14517,6815817,13329,1,0,N,N,N,CP_Units,TT_WBS,DT_FixedDUR2,RV_OK,TK_Active,WT030M0100,030 Tank Erection,1347,840.016666666667,5248,112,7642.64,1466.51,9109.15,560,0,0,0,,2006-08-29 00:00,,2007-05-29 08:01,2007-06-14 08:01,,2007-01-27 08:00,2007-02-11 17:00,2007-01-27 08:00,2007-02-11 17:00,2006-08-30 08:00,2006-12-10 17:00,,2007-05-29 08:01,2007-06-14 08:01,,PT_Normal,,,,,LSuLXFkjTcmOfCxSa/STig,hZfIfAPZTUi3eFRpzdierx,,,N,0,0,,,2007-02-01 02:41,2007-02-04 01:05,hbe4678,hbe4678,2007-01-27 08:00,2007-02-11 17:00,112
74,12456255,14517,6815819,13329,1,0,N,N,N,CP_Units,TT_Task,DT_FixedDUR2,RV_OK,TK_NotStart,CO05AM0145,05A Tank Erection 2101-F (Ammonia Storage Tank),,-407.983333333333,0,1456,0,0,0,1456,0,0,0,,,,2007-06-02 08:01,2008-01-28 08:01,,2007-07-31 08:00,2008-03-26 17:00,2007-07-31 08:00,2008-03-26 17:00,2007-07-31 08:00,2008-03-26 17:00,,2007-06-02 08:01,2008-01-28 08:01,,PT_Normal,,,,,wsT4pYMYRBmV8KGJ6kY7VA,hZfIfAPZTUi3eFRpzdierx,,,Y,0,0,,,2007-02-01 02:41,2007-02-04 01:05,hbe4678,hbe4678,2007-07-31 08:00,2008-03-26 17:00,1456
75,12456256,14517,6815819,13329,1,0,N,N,N,CP_Units,TT_WBS,DT_FixedDUR2,RV_OK,TK_NotStart,WT050M0100,05A Tank Erection,1347,-407.983333333333,2544,1544,0,298558.41,298558.41,1544,0,0,0,,,,2007-06-02 08:01,2008-02-10 08:01,,2007-07-31 08:00,2008-04-08 17:00,2007-07-31 08:00,2008-04-08 17:00,2007-07-31 08:00,2008-04-08 17:00,,2007-06-02 08:01,2008-02-10 08:01,,PT_Normal,,,,,Z48d8cU0SGGJrD2GNPh79g,lp38FYbrQUagvY7iA1yF3B,,,N,0,0,,,2007-02-01 02:41,2007-02-04 01:05,hbe4678,hbe4678,2007-07-31 08:00,2008-04-08 17:00,1544
76,12456257,14517,6815819,13329,1,0,N,N,N,CP_Units,TT_Task,DT_FixedDUR2,RV_OK,TK_NotStart,CO05AM0160,05A Tank Erection 2105-F (Fire Water Tank),,-231.983333333333,0,264,0,0,0,264,0,0,0,,,,2007-08-14 08:01,2007-10-01 08:01,,2007-09-22 08:00,2007-11-15 17:00,2007-09-22 08:00,2007-11-15 17:00,2007-09-22 08:00,2007-11-15 17:00,,2007-08-14 08:01,2007-10-01 08:01,,PT_Normal,,,,,HfO8I8c2Q3+SDHXesViC0w,WttAwSJHH0eijkJoDHhZ3h,,,N,0,0,,,2007-02-01 02:41,2007-02-04 01:00,hbe4678,hbe4678,2007-09-22 08:00,2007-11-15 17:00,264
77,12456258,14517,6815819,13329,1,0,N,N,N,CP_Units,TT_Task,DT_FixedDUR2,RV_OK,TK_NotStart,CO05AM0155,05A Tank Erection 2102-F (Ammonia Storage Tank),,-407.983333333333,0,1456,0,0,0,1456,0,0,0,,,,2007-06-14 08:01,2008-02-10 08:01,,2007-08-13 08:00,2008-04-08 17:00,2007-08-13 08:00,2008-04-08 17:00,2007-08-13 08:00,2008-04-08 17:00,,2007-06-14 08:01,2008-02-10 08:01,,PT_Normal,,,,,5cXh1gnBSv2n3OytVIE26Q,WttAwSJHH0eijkJoDHhZ3h,,,Y,0,0,,,2007-02-01 02:41,2007-02-04 01:05,hbe4678,hbe4678,2007-08-13 08:00,2008-04-08 17:00,1456
78,12456259,14517,6815820,13329,1,0,N,N,N,CP_Units,TT_Task,DT_FixedDUR2,RV_OK,TK_Active,CK02UU4150,02U U/G Pipe Spool Fabrication & Delivery (FW) HDPE,,1312.01666666667,0,144,0,0,0,640,0,0,0,,2006-04-24 00:00,,2007-08-06 08:01,2007-08-27 08:01,2007-02-15 17:00,2007-01-27 08:00,2007-02-15 17:00,2007-01-27 08:00,2007-02-15 17:00,2006-05-15 08:00,2006-08-15 17:00,,2007-08-06 08:01,2007-08-27 08:01,,PT_Normal,,,,,X0egIhH4SSi9/rHU8jz9fQ,nylzLyTv3E+UbKkLCXpWlx,,,N,0,0,,,2007-02-01 02:41,2007-02-04 01:00,hbe4678,hbe4678,2007-01-27 08:00,2007-02-15 17:00,144
79,12456260,14517,6815820,13329,1,0,N,N,N,CP_Units,TT_Task,DT_FixedDUR2,RV_OK,TK_Active,CK01UU4150,01U U/G Pipe Spool Fabrication & Delivery (FW) HDPE,,1312.01666666667,0,144,0,0,0,640,0,0,0,,2006-04-24 00:00,,2007-08-06 08:01,2007-08-27 08:01,2007-02-15 17:00,2007-01-27 08:00,2007-02-15 17:00,2007-01-27 08:00,2007-02-15 17:00,2006-05-13 08:00,2006-08-13 17:00,,2007-08-06 08:01,2007-08-27 08:01,,PT_Normal,,,,,ifTMUkY9TAK0RY0xRgpqdQ,UWxEslakA0WSkT8F7iaX0R,,,N,0,0,,,2007-02-01 02:41,2007-02-04 01:00,hbe4678,hbe4678,2007-01-27 08:00,2007-02-15 17:00,144
80,12456261,14517,6815820,13329,1,100,N,N,N,CP_Units,TT_Task,DT_FixedDUR2,RV_OK,TK_Active,CK03UU4150,03U U/G Pipe Spool Fabrication & Delivery (FW) HDPE,,1312.01666666667,0,144,0,0,0,640,0,0,0,,2006-04-24 00:00,,2007-08-06 08:01,2007-08-27 08:01,2007-02-15 17:00,2007-01-27 08:00,2007-02-15 17:00,2007-01-27 08:00,2007-02-15 17:00,2006-05-13 08:00,2006-08-13 17:00,,2007-08-06 08:01,2007-08-27 08:01,,PT_Normal,,,,,fyBMga7vSVSSawGm1XaF9A,M7oNZNW8WUSWQsZuUQ+iAB,,,N,0,0,,,2007-02-01 02:41,2007-02-04 01:00,hbe4678,hbe4678,2007-01-27 08:00,2007-02-15 17:00,144
81,12456262,14517,6815820,13329,1,0,N,N,N,CP_Units,TT_Task,DT_FixedDUR2,RV_OK,TK_Active,CK05UU4150,05U U/G Pipe Spool Fabrication & Delivery (FW) HDPE,,2544.01666666667,0,144,0,0,0,640,0,0,0,,2006-04-24 00:00,,2008-03-01 08:01,2008-03-22 08:01,2007-02-15 17:00,2007-01-27 08:00,2007-02-15 17:00,2007-01-27 08:00,2007-02-15 17:00,2006-05-15 08:00,2006-08-15 17:00,,2008-03-01 08:01,2008-03-22 08:01,,PT_Normal,,,,,b7Ttwn4uQnGGNXe3qWN3Jw,UWxEslakA0WSkT8F7iaX0R,,,N,0,0,,,2007-02-01 02:41,2007-02-04 01:00,hbe4678,hbe4678,2007-01-27 08:00,2007-02-15 17:00,144
82,12456263,14517,6815821,13329,0,0,N,N,N,CP_Units,TT_FinMile,DT_FixedDUR2,RV_OK,TK_NotStart,PO02HS0000,02H Recv at Site - Structural Steel,,736.016666666667,656,0,0,0,0,0,0,0,0,,,,2007-08-12 08:01,2007-08-12 08:01,,2007-04-25 17:00,2007-04-25 17:00,2007-04-25 17:00,2007-04-25 17:00,2007-04-25 17:00,2007-04-25 17:00,,2007-08-12 08:01,2007-08-12 08:01,,PT_Normal,,,,,c+zCtKpeTHqSVyL6D57iFg,1HvT7RRhsE68SJ1o/V3MHh,,,N,0,0,,,2007-02-01 02:41,2007-02-04 01:00,hbe4678,hbe4678,2007-04-25 17:00,2007-04-25 17:00,0
83,12456264,14517,6815821,13329,0,0,N,N,N,CP_Units,TT_FinMile,DT_FixedDUR2,RV_OK,TK_NotStart,PO02HS0010,02H Recv at Site - Misc Steel,,624.016666666667,0,0,0,0,0,0,0,0,0,,,,2007-07-26 08:01,2007-07-26 08:01,,2007-04-25 17:00,2007-04-25 17:00,2007-04-25 17:00,2007-04-25 17:00,2007-04-25 17:00,2007-04-25 17:00,,2007-07-26 08:01,2007-07-26 08:01,,PT_Normal,,,,,JJdcqHkJQmOjHttjDWuzCw,yq9XWhMXkE2okPE8OhdpTx,,,N,0,0,,,2007-02-01 02:41,2007-02-04 01:00,hbe4678,hbe4678,2007-04-25 17:00,2007-04-25 17:00,0
84,12456265,14517,6815821,13329,1,0,N,N,N,CP_Units,TT_Task,DT_FixedDUR2,RV_OK,TK_Active,PO02CS0130,02C Fab & Ship Miscellaneous Steel,,664.016666666667,0,616,0,0,0,960,0,0,0,2007-05-31 17:00,2006-12-09 00:00,,2007-05-03 08:01,2007-08-01 08:01,2007-04-25 17:00,2007-01-27 08:00,2007-04-25 17:00,2007-01-27 08:00,2007-04-25 17:00,2007-02-28 08:00,2007-07-17 17:00,,2007-05-03 08:01,2007-08-01 08:01,CS_MEOA,PT_Normal,,,,,j6o2N8tMSAmImPiKohdhig,3gnMw9EYIki+XB06svk5WR,,,N,0,0,,,2007-02-01 02:41,2007-02-04 01:00,hbe4678,hbe4678,2007-01-27 08:00,2007-04-25 17:00,616
85,12456266,14517,6815821,13329,0,0,N,N,N,CP_Units,TT_FinMile,DT_FixedDUR2,RV_OK,TK_NotStart,PO02CS0010,02C Recv at Site - Misc Steel,,664.016666666667,0,0,0,0,0,0,0,0,0,,,,2007-08-01 08:01,2007-08-01 08:01,,2007-04-25 17:00,2007-04-25 17:00,2007-04-25 17:00,2007-04-25 17:00,2007-04-25 17:00,2007-04-25 17:00,,2007-08-01 08:01,2007-08-01 08:01,,PT_Normal,,,,,VsztRGevR4CMoyhIrfUkhA,5ylhF054N0iGC2sHJS/JVR,,,N,0,0,,,2007-02-01 02:41,2007-02-04 01:00,hbe4678,hbe4678,2007-04-25 17:00,2007-04-25 17:00,0
86,12456267,14517,6815821,13329,1,0,N,N,N,CP_Units,TT_Task,DT_FixedDUR2,RV_OK,TK_Active,PO02HS0120,02H Fab & Ship Structural Steel,,736.016666666667,0,616,0,0,0,960,0,0,0,,2006-08-09 08:00,,2007-05-14 08:01,2007-08-12 08:01,2007-04-25 17:00,2007-01-27 08:00,2007-04-25 17:00,2007-01-27 08:00,2007-04-25 17:00,2006-08-09 08:00,2007-01-23 17:00,,2007-05-14 08:01,2007-08-12 08:01,,PT_Normal,,,,,n4zzYVElQXGfS5uIQRJNAA,CC7av2d9VkGIC0LJ8hQF/R,,,N,0,0,,,2007-02-01 02:41,2007-02-04 01:00,hbe4678,hbe4678,2007-01-27 08:00,2007-04-25 17:00,616
87,12456268,14517,6815821,13329,1,0,N,N,N,CP_Units,TT_Task,DT_FixedDUR2,RV_OK,TK_Active,PO02HS0130,02H Fab & Ship Miscellaneous Steel,,624.016666666667,0,616,0,0,0,960,0,0,0,,2006-12-16 00:00,,2007-04-28 08:01,2007-07-26 08:01,2007-04-25 17:00,2007-01-27 08:00,2007-04-25 17:00,2007-01-27 08:00,2007-04-25 17:00,2007-01-27 08:00,2007-06-14 17:00,,2007-04-28 08:01,2007-07-26 08:01,,PT_Normal,,,,,WqWNFIFhQUOaKT71qTfjOg,MnR+PLFdnEWgzV7kW76DGB,,,N,0,0,,,2007-02-01 02:41,2007-02-04 01:00,hbe4678,hbe4678,2007-01-27 08:00,2007-04-25 17:00,616
88,12456269,14517,6815821,13329,1,0,N,N,N,CP_Units,TT_Task,DT_FixedDUR2,RV_OK,TK_NotStart,PO000E0000,Purch/Fab/Deliver - A/G Electrical Bulks (First),,160,0,720,0,0,0,720,0,0,0,2007-01-01 08:00,,,2007-02-19 08:00,2007-06-03 17:00,,2007-01-27 08:00,2007-05-10 17:00,2007-01-27 08:00,2007-05-10 17:00,2007-01-27 08:00,2007-05-10 17:00,,2007-02-19 08:00,2007-06-03 17:00,CS_MSOA,PT_Normal,,,,,bG6oyYbySxG70YEWbL0ptQ,Fp0JFjiH+EGCaywydt+CxR,,,N,0,0,,,2007-02-01 02:41,2007-02-01 02:43,hbe4678,hbe4678,2007-01-27 08:00,2007-05-10 17:00,720
89,12456270,14517,6815821,13329,0,0,N,N,N,CP_Units,TT_FinMile,DT_FixedDrtn,RV_OK,TK_NotStart,PO000E0010,Receive at Site - A/G Electrical Bulks (First),,160,0,0,0,0,0,0,0,0,0,,,,2007-06-03 17:00,2007-06-03 17:00,,2007-05-10 17:00,2007-05-10 17:00,2007-05-10 17:00,2007-05-10 17:00,2007-05-10 17:00,2007-05-10 17:00,,2007-06-03 17:00,2007-06-03 17:00,,PT_Normal,,,,,/oWtH3ExTRu+rL5JI69gLg,IUFKj1lg2ESTCfqOpEet2x,,,N,0,0,,,2007-02-01 02:41,2007-02-01 02:43,hbe4678,hbe4678,2007-05-10 17:00,2007-05-10 17:00,0
90,12456271,14517,6815821,13329,1,0,N,N,N,CP_Drtn,TT_Task,DT_FixedDUR2,RV_OK,TK_NotStart,PO000EL000,Electrical Heat Tracing -  Purchase & Deliver Materials (By OCI),,864,168,640,0,0,0,640,0,0,0,,,,2007-07-07 08:00,2007-10-29 17:00,,2007-03-03 08:00,2007-06-03 17:00,2007-03-03 08:00,2007-06-03 17:00,2007-03-03 08:00,2007-06-03 17:00,,2007-07-07 08:00,2007-10-29 17:00,,PT_Normal,,,,,y+655w13Sz6z8p8wd/0dsg,NgKbeFVBREyQe1UlPXkZFw,,,N,0,0,,,2007-02-01 02:41,2007-02-01 02:43,hbe4678,hbe4678,2007-03-03 08:00,2007-06-03 17:00,640
91,12456272,14517,6815821,13329,0,100,N,N,N,CP_Units,TT_FinMile,DT_FixedDUR2,RV_OK,TK_Complete,P002YS0010,02Y Recv at Site - Structural Steel (First Shipment),,,,0,0,0,0,0,0,0,0,,2006-12-27 00:00,2006-12-27 00:00,2006-12-25 08:00,2006-12-25 08:00,,2007-01-27 08:00,2007-01-27 08:00,,,2007-01-06 08:01,2007-01-06 08:01,,,,,PT_Normal,,,,,pSVPEh3rSg+dL1/QGALBnA,IRt7qLhZNk6K31/ZilGVnx,,,N,0,0,,,2007-02-01 02:41,2007-02-04 01:05,hbe4678,hbe4678,,,0
92,12456273,14517,6815821,13329,0,0,N,N,N,CP_Units,TT_FinMile,DT_FixedDUR2,RV_OK,TK_NotStart,PO03ES0010,03E Recv at Site - Misc Steel,,464.016666666667,0,0,0,0,0,0,0,0,0,,,,2007-07-24 08:01,2007-07-24 08:01,,2007-05-16 17:00,2007-05-16 17:00,2007-05-16 17:00,2007-05-16 17:00,2007-05-16 17:00,2007-05-16 17:00,,2007-07-24 08:01,2007-07-24 08:01,,PT_Normal,,,,,Xct3AOC1QgG3m6nzO/q5NQ,RiSqDlKgDU2VnTej6i/ImR,,,N,0,0,,,2007-02-01 02:41,2007-02-04 01:00,hbe4678,hbe4678,2007-05-16 17:00,2007-05-16 17:00,0
93,12456274,14517,6815821,13329,1,0,N,N,N,CP_Units,TT_Task,DT_FixedDUR2,RV_OK,TK_Active,PO03ES0130,03E Fab & Ship Miscellaneous Steel,,464.016666666667,0,760,0,0,0,960,0,0,0,,2006-12-16 00:00,,2007-04-04 08:01,2007-07-24 08:01,2007-05-16 17:00,2007-01-27 08:00,2007-05-16 17:00,2007-01-27 08:00,2007-05-16 17:00,2007-02-28 08:00,2007-07-17 17:00,,2007-04-04 08:01,2007-07-24 08:01,,PT_Normal,,,,,Bxm+YHwBQXGgZ/VqFVIPKA,cqA3w8uBbkekx8jXViWhYB,,,N,0,0,,,2007-02-01 02:41,2007-02-04 01:00,hbe4678,hbe4678,2007-01-27 08:00,2007-05-16 17:00,760
94,12456275,14517,6815821,13329,0,0,N,N,N,CP_Units,TT_FinMile,DT_FixedDUR2,RV_OK,TK_NotStart,PO03YS0000,03Y Recv at Site - Structural Steel,,312,0,0,0,0,0,0,0,0,0,,,,2007-04-15 17:00,2007-04-15 17:00,,2007-02-28 17:00,2007-02-28 17:00,2007-02-28 17:00,2007-02-28 17:00,2007-02-28 17:00,2007-02-28 17:00,,2007-04-15 17:00,2007-04-15 17:00,,PT_Normal,,,,,UOaUd5b+RYOm/xQfM11PLw,qnDURT0KfUyUXmkyGAdhmh,,,N,0,0,,,2007-02-01 02:41,2007-02-01 02:43,hbe4678,hbe4678,2007-02-28 17:00,2007-02-28 17:00,0
95,12456276,14517,6815821,13329,1,0,N,N,N,CP_Units,TT_Task,DT_FixedDUR2,RV_OK,TK_Active,PO03YS0120,03Y Fab & Ship Structural Steel,,312,0,232,0,0,0,960,0,0,0,,2006-11-04 08:00,,2007-03-13 08:00,2007-04-15 17:00,2007-02-28 17:00,2007-01-27 08:00,2007-02-28 17:00,2007-01-27 08:00,2007-02-28 17:00,2006-11-04 08:00,2007-03-29 17:00,,2007-03-13 08:00,2007-04-15 17:00,,PT_Normal,,,,,89TvoS1+Q02Vb5zCKIAD8Q,KqRoCxH/NkyCLIm8pVErOh,,,N,0,0,,,2007-02-01 02:41,2007-02-01 02:43,hbe4678,hbe4678,2007-01-27 08:00,2007-02-28 17:00,232
96,12456277,14517,6815821,13329,0,0,N,N,N,CP_Units,TT_FinMile,DT_FixedDUR2,RV_OK,TK_NotStart,PO01BS0010,01B Recv at Site - Misc Steel,,688,0,0,0,0,0,0,0,0,0,,,,2007-07-07 17:00,2007-07-07 17:00,,2007-03-28 17:00,2007-03-28 17:00,2007-03-28 17:00,2007-03-28 17:00,2007-03-28 17:00,2007-03-28 17:00,,2007-07-07 17:00,2007-07-07 17:00,,PT_Normal,,,,,5eZek5/US1GxJCCf2+LbWQ,L2CTge+lYkWjFkQji/ZKeR,,,N,0,0,,,2007-02-01 02:41,2007-02-01 02:43,hbe4678,hbe4678,2007-03-28 17:00,2007-03-28 17:00,0
97,12456278,14517,6815821,13329,1,0,N,N,N,CP_Units,TT_Task,DT_FixedDUR2,RV_OK,TK_Active,PO01BS0130,01B Fab & Ship Miscellaneous Steel,,688,0,424,0,0,0,960,0,0,0,,2006-11-03 00:00,,2007-05-07 08:00,2007-07-07 17:00,2007-03-28 17:00,2007-01-27 08:00,2007-03-28 17:00,2007-01-27 08:00,2007-03-28 17:00,2007-01-06 08:00,2007-05-24 17:00,,2007-05-07 08:00,2007-07-07 17:00,,PT_Normal,,,,,5OaXYRNTThmg3mqGeSSOCw,kdNu8oSxT0SN1xfkZSGtxx,,,N,0,0,,,2007-02-01 02:41,2007-02-01 02:43,hbe4678,hbe4678,2007-01-27 08:00,2007-03-28 17:00,424
98,12456279,14517,6815821,13329,0,0,N,N,N,CP_Units,TT_FinMile,DT_FixedDUR2,RV_OK,TK_NotStart,PO01CS0010,01C Recv at Site - Misc Steel,,848.016666666667,0,0,0,0,0,0,0,0,0,,,,2007-09-11 08:01,2007-09-11 08:01,,2007-05-09 17:00,2007-05-09 17:00,2007-05-09 17:00,2007-05-09 17:00,2007-05-09 17:00,2007-05-09 17:00,,2007-09-11 08:01,2007-09-11 08:01,,PT_Normal,,,,,d+FRsZFhQLCe/3TSc18TVg,UNMK/rHQ3ESibGTsnPNNVx,,,N,0,0,,,2007-02-01 02:41,2007-02-04 01:00,hbe4678,hbe4678,2007-05-09 17:00,2007-05-09 17:00,0
99,12456280,14517,6815821,13329,1,0,N,N,N,CP_Units,TT_Task,DT_FixedDUR2,RV_OK,TK_Active,PO01CS0130,01C Fab & Ship Miscellaneous Steel,,848.016666666667,0,664,0,0,0,960,0,0,0,2007-04-30 17:00,2006-12-14 00:00,,2007-06-06 08:01,2007-09-11 08:01,2007-05-09 17:00,2007-02-03 08:00,2007-05-09 17:00,2007-02-03 08:00,2007-05-09 17:00,2007-02-03 08:00,2007-06-21 17:00,,2007-06-06 08:01,2007-09-11 08:01,CS_MEOA,PT_Normal,,,,,/+wRcXfCRWauPtRpKSwNaw,a+Wjb13tKU658gWU6BIwax,,,N,0,0,,,2007-02-01 02:41,2007-02-04 01:00,hbe4678,hbe4678,2007-02-03 08:00,2007-05-09 17:00,664
100,12456281,14517,6815821,13329,0,0,N,N,N,CP_Units,TT_FinMile,DT_FixedDUR2,RV_OK,TK_NotStart,PO01DS0000,01D Recv at Site - Structural Steel,,752.016666666667,264,0,0,0,0,0,0,0,0,,,,2007-07-10 08:01,2007-07-10 08:01,,2007-03-21 17:00,2007-03-21 17:00,2007-03-21 17:00,2007-03-21 17:00,2007-03-21 17:00,2007-03-21 17:00,,2007-07-10 08:01,2007-07-10 08:01,,PT_Normal,,,,,glvzvQLZRVC+UCPH2HwSvg,7VbS82m9VkqAH511MA7cNx,,,N,0,0,,,2007-02-01 02:41,2007-02-04 01:00,hbe4678,hbe4678,2007-03-21 17:00,2007-03-21 17:00,0
101,12456282,14517,6815821,13329,0,0,N,N,N,CP_Units,TT_FinMile,DT_FixedDUR2,RV_OK,TK_NotStart,PO01DS0010,01D Recv at Site - Misc Steel,,752.016666666667,264,0,0,0,0,0,0,0,0,,,,2007-07-10 08:01,2007-07-10 08:01,,2007-03-21 17:00,2007-03-21 17:00,2007-03-21 17:00,2007-03-21 17:00,2007-03-21 17:00,2007-03-21 17:00,,2007-07-10 08:01,2007-07-10 08:01,,PT_Normal,,,,,6vuIVVzARUWfUSjreXIBOQ,Hmf/u24sqUCzUajJbkB6/x,,,N,0,0,,,2007-02-01 02:41,2007-02-04 01:00,hbe4678,hbe4678,2007-03-21 17:00,2007-03-21 17:00,0
102,12456283,14517,6815821,13329,1,0,N,N,N,CP_Units,TT_Task,DT_FixedDUR2,RV_OK,TK_Active,PO01DS0120,01D Fab & Ship Structural Steel,,752.016666666667,0,376,0,0,0,960,0,0,0,,2006-09-28 00:00,,2007-05-16 08:01,2007-07-10 08:01,2007-03-21 17:00,2007-01-27 08:00,2007-03-21 17:00,2007-01-27 08:00,2007-03-21 17:00,2006-10-28 08:00,2007-03-22 17:00,,2007-05-16 08:01,2007-07-10 08:01,,PT_Normal,,,,,0udUOtQYQrK/dKgLq3e9dQ,O9h5e7ESWUGKDpDSGRSwOR,,,N,0,0,,,2007-02-01 02:41,2007-02-04 01:00,hbe4678,hbe4678,2007-01-27 08:00,2007-03-21 17:00,376
103,12456284,14517,6815821,13329,1,0,N,N,N,CP_Units,TT_Task,DT_FixedDUR2,RV_OK,TK_Active,PO01DS0130,01D Fab & Ship Miscellaneous Steel,,752.016666666667,0,376,0,0,0,960,0,0,0,,2006-11-02 00:00,,2007-05-16 08:01,2007-07-10 08:01,2007-03-21 17:00,2007-01-27 08:00,2007-03-21 17:00,2007-01-27 08:00,2007-03-21 17:00,2007-01-06 08:00,2007-05-24 17:00,,2007-05-16 08:01,2007-07-10 08:01,,PT_Normal,,,,,uAwNcU0zR82qlSvaxU0IFA,KL8ZEGLAdU2GslocihGsoh,,,N,0,0,,,2007-02-01 02:41,2007-02-04 01:00,hbe4678,hbe4678,2007-01-27 08:00,2007-03-21 17:00,376
104,12456285,14517,6815821,13329,0,0,N,N,N,CP_Units,TT_FinMile,DT_FixedDUR2,RV_OK,TK_NotStart,PO01HS0010,01H Recv at Site - Misc Steel,,408.016666666667,0,0,0,0,0,0,0,0,0,,,,2007-07-09 08:01,2007-07-09 08:01,,2007-05-09 17:00,2007-05-09 17:00,2007-05-09 17:00,2007-05-09 17:00,2007-05-09 17:00,2007-05-09 17:00,,2007-07-09 08:01,2007-07-09 08:01,,PT_Normal,,,,,ecQJpIg6R7WldRJCSnthBQ,Ck4vWcLYp0ytVWtr72J4Xx,,,N,0,0,,,2007-02-01 02:41,2007-02-04 01:00,hbe4678,hbe4678,2007-05-09 17:00,2007-05-09 17:00,0
105,12456286,14517,6815821,13329,1,0,N,N,N,CP_Units,TT_Task,DT_FixedDUR2,RV_OK,TK_NotStart,PO01HS0130,01H Fab & Ship Miscellaneous Steel,,408.016666666667,0,712,0,0,0,960,0,0,0,,,,2007-03-27 08:01,2007-07-09 08:01,2007-05-09 17:00,2007-01-27 08:00,2007-05-09 17:00,2007-01-27 08:00,2007-05-09 17:00,2007-01-27 08:00,2007-06-14 17:00,,2007-03-27 08:01,2007-07-09 08:01,,PT_Normal,,,,,6YKI82KJRB6RFgEJJkjRWw,mK9MtDspZkyiPZUFHA0Kyx,,,N,0,0,,,2007-02-01 02:41,2007-02-04 01:05,hbe4678,hbe4678,2007-01-27 08:00,2007-05-09 17:00,712
106,12456287,14517,6815821,13329,1,0,N,N,N,CP_Units,TT_Task,DT_FixedDUR2,RV_OK,TK_Active,PO01YS0120,01Y Fab & Ship Structural Steel,,312,0,232,0,0,0,960,0,0,0,,2006-07-24 08:00,,2007-03-13 08:00,2007-04-15 17:00,2007-02-28 17:00,2007-01-27 08:00,2007-02-28 17:00,2007-01-27 08:00,2007-02-28 17:00,2006-07-24 08:00,2007-01-07 17:00,,2007-03-13 08:00,2007-04-15 17:00,,PT_Normal,,,,,dW0+zp0aSgeYMcm0hNhKxQ,iZmc+7Lnx0K64U+vQ9RsUB,,,N,0,0,,,2007-02-01 02:41,2007-02-01 02:43,hbe4678,hbe4678,2007-01-27 08:00,2007-02-28 17:00,232
107,12456288,14517,6815821,13329,0,0,N,N,N,CP_Units,TT_FinMile,DT_FixedDUR2,RV_OK,TK_NotStart,PO05AS0000,05A Recv at Site - Structural Steel,,184,0,0,0,0,0,0,0,0,0,,,,2007-07-31 08:01,2007-07-31 08:01,,2007-07-04 08:01,2007-07-04 08:01,2007-07-04 08:01,2007-07-04 08:01,2007-07-04 08:01,2007-07-04 08:01,,2007-07-31 08:01,2007-07-31 08:01,,PT_Normal,,,,,k5sp2waGRLKAYfHz3JtPeQ,8o9H2AO9/0+4XSghShczix,,,N,0,0,,,2007-02-01 02:41,2007-02-04 01:02,hbe4678,hbe4678,2007-07-04 08:01,2007-07-04 08:01,0
108,12456289,14517,6815821,13329,0,0,N,N,N,CP_Units,TT_FinMile,DT_FixedDUR2,RV_OK,TK_NotStart,PO05AS0010,05A Recv at Site - Misc Steel,,216,32,0,0,0,0,0,0,0,0,,,,2007-08-05 08:01,2007-08-05 08:01,,2007-07-04 08:01,2007-07-04 08:01,2007-07-04 08:01,2007-07-04 08:01,2007-07-04 08:01,2007-07-04 08:01,,2007-08-05 08:01,2007-08-05 08:01,,PT_Normal,,,,,nRo7ga0dRS2NYr8EaMFf/Q,toRKcc/U406j4XdPl9ZTTh,,,N,0,0,,,2007-02-01 02:41,2007-02-04 01:02,hbe4678,hbe4678,2007-07-04 08:01,2007-07-04 08:01,0
109,12456290,14517,6815821,13329,1,0,N,N,N,CP_Units,TT_Task,DT_FixedDUR2,RV_OK,TK_NotStart,PO05AS0120,05A Fab & Ship Structural Steel,,184,0,960,0,0,0,960,0,0,0,2007-07-04 08:00,,,2007-03-13 08:01,2007-07-31 08:01,,2007-02-14 08:01,2007-07-04 08:01,2007-02-14 08:01,2007-07-04 08:01,2007-02-14 08:01,2007-07-04 08:01,,2007-03-13 08:01,2007-07-31 08:01,CS_MEOA,PT_Normal,,,,,e3YphV2JS0qnMAz4GudJ3w,Ji/mZCn+CkSgDkoDnZClJx,,,N,0,0,,,2007-02-01 02:41,2007-02-01 02:43,hbe4678,hbe4678,2007-02-14 08:01,2007-07-04 08:01,960
110,12456291,14517,6815821,13329,1,0,N,N,N,CP_Units,TT_Task,DT_FixedDUR2,RV_OK,TK_NotStart,PO05AS0130,05A Fab & Ship Miscellaneous Steel,,216,0,960,0,0,0,960,0,0,0,2007-07-04 08:00,,,2007-03-18 08:01,2007-08-05 08:01,,2007-02-14 08:01,2007-07-04 08:01,2007-02-14 08:01,2007-07-04 08:01,2007-02-14 08:01,2007-07-04 08:01,,2007-03-18 08:01,2007-08-05 08:01,CS_MEOA,PT_Normal,,,,,IMAr46iARoK/Ubj0gzJMLQ,+8+StcIu20K2smcA6u7S+h,,,N,0,0,,,2007-02-01 02:41,2007-02-04 01:02,hbe4678,hbe4678,2007-02-14 08:01,2007-07-04 08:01,960
111,12456292,14517,6815821,13329,0,0,N,N,N,CP_Units,TT_FinMile,DT_FixedDUR2,RV_OK,TK_NotStart,PO05BS0010,05B Recv at Site - Misc Steel,,696.016666666667,88,0,0,0,0,0,0,0,0,,,,2007-11-14 08:01,2007-11-14 08:01,,2007-07-12 17:00,2007-07-12 17:00,2007-07-12 17:00,2007-07-12 17:00,2007-07-12 17:00,2007-07-12 17:00,,2007-11-14 08:01,2007-11-14 08:01,,PT_Normal,,,,,R+cFSpa2RDOwE4JQRexw2g,qwt5xrJFyUGnSzfp4mMAhx,,,N,0,0,,,2007-02-01 02:41,2007-02-04 01:00,hbe4678,hbe4678,2007-07-12 17:00,2007-07-12 17:00,0
112,12456293,14517,6815821,13329,1,0,N,N,N,CP_Units,TT_Task,DT_FixedDUR2,RV_OK,TK_NotStart,PO05BS0130,05B Fab & Ship Miscellaneous Steel,,696.016666666667,0,960,0,0,0,960,0,0,0,2007-07-04 17:00,,,2007-06-05 08:01,2007-11-14 08:01,,2007-02-24 08:00,2007-07-12 17:00,2007-02-24 08:00,2007-07-12 17:00,2007-02-24 08:00,2007-07-12 17:00,,2007-06-05 08:01,2007-11-14 08:01,CS_MEOA,PT_Normal,,,,,b27Xqx/qTWCH5QHFR4crrw,/B6Okh9AEEm0q0SnQkNcZB,,,N,0,0,,,2007-02-01 02:41,2007-02-04 01:00,hbe4678,hbe4678,2007-02-24 08:00,2007-07-12 17:00,960
113,12456294,14517,6815821,13329,0,0,N,N,N,CP_Units,TT_FinMile,DT_FixedDUR2,RV_OK,TK_NotStart,PO02JS0010,02J Recv at Site - Misc Steel,,880.016666666667,96,0,0,0,0,0,0,0,0,,,,2007-10-03 08:01,2007-10-03 08:01,,2007-05-16 17:00,2007-05-16 17:00,2007-05-16 17:00,2007-05-16 17:00,2007-05-16 17:00,2007-05-16 17:00,,2007-10-03 08:01,2007-10-03 08:01,,PT_Normal,,,,,t/yM2j4bT3a1Wv9IL/0u8A,STgDrccUp0Wb3RGv0AFSBh,,,N,0,0,,,2007-02-01 02:41,2007-02-04 01:00,hbe4678,hbe4678,2007-05-16 17:00,2007-05-16 17:00,0
114,12456295,14517,6815821,13329,1,0,N,N,N,CP_Units,TT_Task,DT_FixedDUR2,RV_OK,TK_Active,PO02JS0120,02J Fab & Ship Structural Steel,,784.016666666667,0,760,0,0,0,960,0,0,0,,2006-07-01 08:00,,2007-05-21 08:01,2007-09-09 08:01,2007-05-16 17:00,2007-01-27 08:00,2007-05-16 17:00,2007-01-27 08:00,2007-05-16 17:00,2006-07-01 08:00,2006-12-07 17:00,,2007-05-21 08:01,2007-09-09 08:01,,PT_Normal,,,,,OYpLw8RHQmmymXBqczhsOQ,1PRj6quy5U+AGp3BJmskHR,,,N,0,0,,,2007-02-01 02:41,2007-02-04 01:00,hbe4678,hbe4678,2007-01-27 08:00,2007-05-16 17:00,760
115,12456296,14517,6815821,13329,1,0,N,N,N,CP_Units,TT_Task,DT_FixedDUR2,RV_OK,TK_Active,PO02JS0130,02J Fab & Ship Miscellaneous Steel,,880.016666666667,0,760,0,0,0,960,0,0,0,,2006-10-28 00:00,,2007-06-04 08:01,2007-10-03 08:01,2007-05-16 17:00,2007-01-27 08:00,2007-05-16 17:00,2007-01-27 08:00,2007-05-16 17:00,2006-12-09 08:00,2007-05-03 17:00,,2007-06-04 08:01,2007-10-03 08:01,,PT_Normal,,,,,WyQSnJTgTjGNJ54vknNo2w,pC9zOj88MEebiWUOlr0Nqx,,,N,0,0,,,2007-02-01 02:41,2007-02-04 01:00,hbe4678,hbe4678,2007-01-27 08:00,2007-05-16 17:00,760
116,12456297,14517,6815821,13329,0,0,N,N,N,CP_Units,TT_FinMile,DT_FixedDUR2,RV_OK,TK_NotStart,PO02KS0010,02K Recv at Site - Misc Steel,,960.016666666667,152.016666666667,0,0,0,0,0,0,0,0,,,,2007-10-20 08:01,2007-10-20 08:01,,2007-05-09 17:00,2007-05-09 17:00,2007-05-09 17:00,2007-05-09 17:00,2007-05-09 17:00,2007-05-09 17:00,,2007-10-20 08:01,2007-10-20 08:01,,PT_Normal,,,,,hQFapaH6TXGdO4WtXpzaWw,o2uXca9/oEyv1SLHXA7xMB,,,N,0,0,,,2007-02-01 02:41,2007-02-04 01:00,hbe4678,hbe4678,2007-05-09 17:00,2007-05-09 17:00,0
117,12456298,14517,6815821,13329,1,0,N,N,N,CP_Units,TT_Task,DT_FixedDUR2,RV_OK,TK_Active,PO02KS0130,02K Fab & Ship Miscellaneous Steel,,960.016666666667,0,328,0,0,0,960,0,0,0,,2006-11-23 00:00,,2007-08-11 08:01,2007-10-20 08:01,2007-05-09 17:00,2007-03-24 08:00,2007-05-09 17:00,2007-03-24 08:00,2007-05-09 17:00,2007-01-20 08:00,2007-06-07 17:00,,2007-08-11 08:01,2007-10-20 08:01,,PT_Normal,,,,,AxV1HbJyR7qc74PZdP3/bQ,w026Uqfh/EWsMGkmCbATFR,,,N,0,0,,,2007-02-01 02:41,2007-02-04 01:00,hbe4678,hbe4678,2007-03-24 08:00,2007-05-09 17:00,328
118,12456299,14517,6815821,13329,0,0,N,N,N,CP_Units,TT_FinMile,DT_FixedDUR2,RV_OK,TK_NotStart,PO01YS0000,01Y Recv at Site - Structural Steel,,312,0,0,0,0,0,0,0,0,0,,,,2007-04-15 17:00,2007-04-15 17:00,,2007-02-28 17:00,2007-02-28 17:00,2007-02-28 17:00,2007-02-28 17:00,2007-02-28 17:00,2007-02-28 17:00,,2007-04-15 17:00,2007-04-15 17:00,,PT_Normal,,,,,KdsHYE1gQ+e/kwrnFKW7kg,x3wcFq8diU+rNDBtIAkMWR,,,N,0,0,,,2007-02-01 02:41,2007-02-01 02:43,hbe4678,hbe4678,2007-02-28 17:00,2007-02-28 17:00,0
119,12456300,14517,6815821,13329,0,0,N,N,N,CP_Units,TT_FinMile,DT_FixedDUR2,RV_OK,TK_NotStart,PO02MS0000,02M Recv at Site - Structural Steel,,984.016666666667,0,0,0,0,0,0,0,0,0,,,,2007-09-10 08:01,2007-09-10 08:01,,2007-04-18 17:00,2007-04-18 17:00,2007-04-18 17:00,2007-04-18 17:00,2007-04-18 17:00,2007-04-18 17:00,,2007-09-10 08:01,2007-09-10 08:01,,PT_Normal,,,,,XVVcMwcvQla5YccbkPRsMQ,2IjCLnjikkyFyW4zRxGbNB,,,N,0,0,,,2007-02-01 02:41,2007-02-04 01:00,hbe4678,hbe4678,2007-04-18 17:00,2007-04-18 17:00,0
120,12456301,14517,6815821,13329,0,0,N,N,N,CP_Units,TT_FinMile,DT_FixedDUR2,RV_OK,TK_NotStart,PO02MS0010,02M Recv at Site - Misc Steel,,1176.01666666667,192,0,0,0,0,0,0,0,0,,,,2007-10-30 08:01,2007-10-30 08:01,,2007-04-18 17:00,2007-04-18 17:00,2007-04-18 17:00,2007-04-18 17:00,2007-04-18 17:00,2007-04-18 17:00,,2007-10-30 08:01,2007-10-30 08:01,,PT_Normal,,,,,3IElHIP+RXKBdPjjD8nEeQ,YrMFJUJh70mkmYU+1n5XpR,,,N,0,0,,,2007-02-01 02:41,2007-02-04 01:00,hbe4678,hbe4678,2007-04-18 17:00,2007-04-18 17:00,0
121,12456302,14517,6815821,13329,1,0,N,N,N,CP_Units,TT_Task,DT_FixedDUR2,RV_OK,TK_Active,PO02MS0120,02M Fab & Ship Structural Steel,,984.016666666667,0,568,0,0,0,960,0,0,0,,2006-08-01 08:00,,2007-06-19 08:01,2007-09-10 08:01,2007-04-18 17:00,2007-01-27 08:00,2007-04-18 17:00,2007-01-27 08:00,2007-04-18 17:00,2006-08-01 08:00,2007-01-15 17:00,,2007-06-19 08:01,2007-09-10 08:01,,PT_Normal,,,,,8U914mcxQXm4HnGlbl+fCA,cGD3BQnsEUm7EZz3uksNIB,,,N,0,0,,,2007-02-01 02:41,2007-02-04 01:00,hbe4678,hbe4678,2007-01-27 08:00,2007-04-18 17:00,568
122,12456303,14517,6815821,13329,1,0,N,N,N,CP_Units,TT_Task,DT_FixedDUR2,RV_OK,TK_Active,PO02MS0130,02M Fab & Ship Miscellaneous Steel,,1176.01666666667,0,568,0,0,0,960,0,0,0,,2006-08-22 00:00,,2007-07-17 08:01,2007-10-30 08:01,2007-04-18 17:00,2007-01-27 08:00,2007-04-18 17:00,2007-01-27 08:00,2007-04-18 17:00,2006-10-04 08:00,2007-03-14 17:00,,2007-07-17 08:01,2007-10-30 08:01,,PT_Normal,,,,,R/okn1ULRZejEgMPtzpm8Q,Sf9KONMXDU66gB8B8vXAfh,,,N,0,0,,,2007-02-01 02:41,2007-02-04 01:00,hbe4678,hbe4678,2007-01-27 08:00,2007-04-18 17:00,568
123,12456304,14517,6815821,13329,0,0,N,N,N,CP_Units,TT_FinMile,DT_FixedDUR2,RV_OK,TK_NotStart,PO02YS0000,02Y Recv at Site - Structural Steel (Last Shipment),,-112,168,0,0,0,0,0,0,0,0,,,,2007-03-19 17:00,2007-03-19 17:00,,2007-04-04 17:00,2007-04-04 17:00,2007-04-04 17:00,2007-04-04 17:00,2007-04-04 17:00,2007-04-04 17:00,,2007-03-19 17:00,2007-03-19 17:00,,PT_Normal,,,,,lJOcabUHQFSVQSB6qobJxw,NfjycUoemkmagWrSx746DR,,,N,0,0,,,2007-02-01 02:41,2007-02-01 02:43,hbe4678,hbe4678,2007-04-04 17:00,2007-04-04 17:00,0
124,12456305,14517,6815821,13329,1,0,N,N,N,CP_Units,TT_Task,DT_FixedDUR2,RV_OK,TK_Active,PO02YS0120,02Y Fab & Ship Structural Steel,,-176,0,472,0,0,0,960,0,0,0,,2006-07-24 00:00,,2006-12-25 08:00,2007-03-10 17:00,2007-04-04 17:00,2007-01-27 08:00,2007-04-04 17:00,2007-01-27 08:00,2007-04-04 17:00,2006-07-29 08:00,2007-01-11 17:00,,2006-12-25 08:00,2007-03-10 17:00,,PT_Normal,,,,,2Q9aL3jVQrC9y2SL2plO8g,hEd+R9CK60ehq0Hdcejsvh,,,N,0,0,,,2007-02-01 02:41,2007-02-01 02:43,hbe4678,hbe4678,2007-01-27 08:00,2007-04-04 17:00,472
125,12456306,14517,6815821,13329,0,0,N,N,N,CP_Units,TT_FinMile,DT_FixedDUR2,RV_OK,TK_NotStart,PO03AS0010,03A Recv at Site - Misc Steel,,448,0,0,0,0,0,0,0,0,0,,,,2007-07-21 17:00,2007-07-21 17:00,,2007-05-16 17:00,2007-05-16 17:00,2007-05-16 17:00,2007-05-16 17:00,2007-05-16 17:00,2007-05-16 17:00,,2007-07-21 17:00,2007-07-21 17:00,,PT_Normal,,,,,7vyGUKfeRbiy6wbf8xF6Pw,W9/87yPdsEeb4I5bgL5Jdh,,,N,0,0,,,2007-02-01 02:41,2007-02-01 02:43,hbe4678,hbe4678,2007-05-16 17:00,2007-05-16 17:00,0
126,12456307,14517,6815821,13329,1,0,N,N,N,CP_Units,TT_Task,DT_FixedDUR2,RV_OK,TK_Active,PO03AS0130,03A Fab & Ship Miscellaneous Steel,,448,0,760,0,0,0,960,0,0,0,,2006-11-22 00:00,,2007-04-02 08:00,2007-07-21 17:00,2007-05-16 17:00,2007-01-27 08:00,2007-05-16 17:00,2007-01-27 08:00,2007-05-16 17:00,2007-01-06 08:00,2007-05-24 17:00,,2007-04-02 08:00,2007-07-21 17:00,,PT_Normal,,,,,mOKO9U4+TtqDyIQ+F/9sKw,y/L0li4XqkWLFQkaOVU+YR,,,N,0,0,,,2007-02-01 02:41,2007-02-01 02:43,hbe4678,hbe4678,2007-01-27 08:00,2007-05-16 17:00,760
127,12456308,14517,6815821,13329,0,0,N,N,N,CP_Units,TT_FinMile,DT_FixedDUR2,RV_OK,TK_NotStart,PO03BS0010,03B Recv at Site - Misc Steel,,1352.01666666667,0,0,0,0,0,0,0,0,0,,,,2007-12-16 08:01,2007-12-16 08:01,,2007-05-09 17:00,2007-05-09 17:00,2007-05-09 17:00,2007-05-09 17:00,2007-05-09 17:00,2007-05-09 17:00,,2007-12-16 08:01,2007-12-16 08:01,,PT_Normal,,,,,K4cUTMPuR/OO84bRqfvRnA,W9/87yPdsEeb4I5bgL5Jdh,,,N,0,0,,,2007-02-01 02:41,2007-02-04 01:00,hbe4678,hbe4678,2007-05-09 17:00,2007-05-09 17:00,0
128,12456309,14517,6815821,13329,1,0,N,N,N,CP_Units,TT_Task,DT_FixedDUR2,RV_OK,TK_Active,PO03BS0130,03B Fab & Ship Miscellaneous Steel,,1352.01666666667,0,712,0,0,0,960,0,0,0,,2006-11-11 00:00,,2007-08-12 08:01,2007-12-16 08:01,2007-05-09 17:00,2007-01-27 08:00,2007-05-09 17:00,2007-01-27 08:00,2007-05-09 17:00,2006-12-23 08:00,2007-05-17 17:00,,2007-08-12 08:01,2007-12-16 08:01,,PT_Normal,,,,,bkcGxjILQTiibB3tKihz3Q,y/L0li4XqkWLFQkaOVU+YR,,,N,0,0,,,2007-02-01 02:41,2007-02-04 01:00,hbe4678,hbe4678,2007-01-27 08:00,2007-05-09 17:00,712
129,12456310,14517,6815821,13329,0,0,N,N,N,CP_Units,TT_FinMile,DT_FixedDUR2,RV_OK,TK_NotStart,PO03CS0010,03C Recv at Site - Misc Steel,,696,0,0,0,0,0,0,0,0,0,,,,2007-08-26 17:00,2007-08-26 17:00,,2007-05-16 17:00,2007-05-16 17:00,2007-05-16 17:00,2007-05-16 17:00,2007-05-16 17:00,2007-05-16 17:00,,2007-08-26 17:00,2007-08-26 17:00,,PT_Normal,,,,,I+SvhC5lTAK4nVPVynDpNA,hO8aCh99JkS0SrD/j01BSR,,,N,0,0,,,2007-02-01 02:41,2007-02-01 02:43,hbe4678,hbe4678,2007-05-16 17:00,2007-05-16 17:00,0
130,12456311,14517,6815821,13329,1,0,N,N,N,CP_Units,TT_Task,DT_FixedDUR2,RV_OK,TK_Active,PO03CS0130,03C Fab & Ship Miscellaneous Steel,,696,0,760,0,0,0,960,0,0,0,,2006-09-05 00:00,,2007-05-08 08:00,2007-08-26 17:00,2007-05-16 17:00,2007-01-27 08:00,2007-05-16 17:00,2007-01-27 08:00,2007-05-16 17:00,2006-10-14 08:00,2007-03-19 17:00,,2007-05-08 08:00,2007-08-26 17:00,,PT_Normal,,,,,HK4o62opSy2ie5MdjO9iRw,0Bvmullp1EGHy2QEsk5XTh,,,N,0,0,,,2007-02-01 02:41,2007-02-01 02:43,hbe4678,hbe4678,2007-01-27 08:00,2007-05-16 17:00,760
131,12456312,14517,6815821,13329,0,0,N,N,N,CP_Units,TT_FinMile,DT_FixedDUR2,RV_OK,TK_NotStart,PO03DS0010,03D Recv at Site - Misc Steel,,784.016666666667,0,0,0,0,0,0,0,0,0,,,,2007-09-09 08:01,2007-09-09 08:01,,2007-05-16 17:00,2007-05-16 17:00,2007-05-16 17:00,2007-05-16 17:00,2007-05-16 17:00,2007-05-16 17:00,,2007-09-09 08:01,2007-09-09 08:01,,PT_Normal,,,,,Bt3V0vbjQRylwkVKeAEoQA,bA4AUmnX5ke5t/D/Qwvkex,,,N,0,0,,,2007-02-01 02:41,2007-02-04 01:00,hbe4678,hbe4678,2007-05-16 17:00,2007-05-16 17:00,0
132,12456313,14517,6815821,13329,1,0,N,N,N,CP_Units,TT_Task,DT_FixedDUR2,RV_OK,TK_Active,PO03DS0130,03D Fab & Ship Miscellaneous Steel,,784.016666666667,0,760,0,0,0,960,0,0,0,,2006-10-21 00:00,,2007-05-21 08:01,2007-09-09 08:01,2007-05-16 17:00,2007-01-27 08:00,2007-05-16 17:00,2007-01-27 08:00,2007-05-16 17:00,2006-12-02 08:00,2007-04-26 17:00,,2007-05-21 08:01,2007-09-09 08:01,,PT_Normal,,,,,FxW0KZJrTW6M+HjbhR1FfQ,2Ldb92nSGEC3xZbBbUq40h,,,N,0,0,,,2007-02-01 02:41,2007-02-04 01:00,hbe4678,hbe4678,2007-01-27 08:00,2007-05-16 17:00,760
133,12456314,14517,6815821,13329,1,100,N,N,N,CP_Units,TT_Task,DT_FixedDUR2,RV_OK,TK_Complete,PO000V1000,Purch/Fab/Delv - Painting Materials,,,,0,0,0,0,960,0,0,0,,2006-07-01 08:00,2006-09-26 00:00,2007-07-28 08:01,2007-07-28 08:01,,2007-01-27 00:00,2007-01-27 00:00,,,2006-07-01 08:00,2006-12-07 17:00,,,,,PT_Normal,,,,,CW/Hly5QQKyHu98WBxMiCg,,,,N,0,0,,,2007-02-01 02:41,2007-02-04 01:05,hbe4678,hbe4678,,,0
134,12456315,14517,6815821,13329,0,100,N,N,N,CP_Units,TT_FinMile,DT_FixedDrtn,RV_OK,TK_Complete,PO000V1005,Receive at Site - Painting Materials,,,,0,0,0,0,0,0,0,0,,2006-09-26 00:00,2006-09-26 00:00,2007-07-28 08:01,2007-07-28 08:01,,2007-01-27 00:00,2007-01-27 00:00,,,2006-09-23 08:01,2006-09-23 08:01,,,,,PT_Normal,,,,,DlmpheDmRDyHOUhx6hsiDQ,,,,N,0,0,,,2007-02-01 02:41,2007-02-04 01:05,hbe4678,hbe4678,,,0
135,12456316,14517,6815821,13329,1,0,N,N,N,CP_Units,TT_Task,DT_FixedDUR2,RV_OK,TK_NotStart,PO000V2000,Purch/Fab/Delv - Insulation Materials,,784.016666666667,0,960,0,0,0,960,0,0,0,2007-01-01 08:00,,,2007-05-21 08:01,2007-10-30 08:01,,2007-01-27 08:00,2007-06-14 17:00,2007-01-27 08:00,2007-06-14 17:00,2007-01-27 08:00,2007-06-14 17:00,,2007-05-21 08:01,2007-10-30 08:01,CS_MSOA,PT_Normal,,,,,ej1SPrQSSR+bivZBRkMiDw,,,,N,0,0,,,2007-02-01 02:41,2007-02-04 01:00,hbe4678,hbe4678,2007-01-27 08:00,2007-06-14 17:00,960
136,12456317,14517,6815821,13329,0,0,N,N,N,CP_Units,TT_FinMile,DT_FixedDrtn,RV_OK,TK_NotStart,PO000V2005,Receive at Site - Insulation Materials,,784.016666666667,0,0,0,0,0,0,0,0,0,,,,2007-10-30 08:01,2007-10-30 08:01,,2007-06-14 17:00,2007-06-14 17:00,2007-06-14 17:00,2007-06-14 17:00,2007-06-14 17:00,2007-06-14 17:00,,2007-10-30 08:01,2007-10-30 08:01,,PT_Normal,,,,,SSj3MVsnQYGA2JVJ4oNq/A,,,,N,0,0,,,2007-02-01 02:41,2007-02-04 01:00,hbe4678,hbe4678,2007-06-14 17:00,2007-06-14 17:00,0
137,12456318,14517,6815821,13329,1,0,N,N,N,CP_Units,TT_Task,DT_FixedDUR2,RV_OK,TK_Active,PO02LS0120,02L Fab & Ship Structural Steel,,-119.983333333333,0,472,0,0,0,960,0,0,0,,2006-08-26 08:00,,2007-01-09 08:01,2007-03-19 08:01,2007-04-04 17:00,2007-01-27 08:00,2007-04-04 17:00,2007-01-27 08:00,2007-04-04 17:00,2006-08-26 08:00,2007-02-08 17:00,,2007-01-09 08:01,2007-03-19 08:01,,PT_Normal,,,,,H9GpIr/jTY6K81zV7VSLWQ,,,,N,0,0,,,2007-02-01 02:41,2007-02-04 01:00,hbe4678,hbe4678,2007-01-27 08:00,2007-04-04 17:00,472
138,12456319,14517,6815821,13329,1,0,N,N,N,CP_Units,TT_Task,DT_FixedDUR2,RV_OK,TK_Active,PO02LS0130,02L Fab & Ship Miscellaneous Steel,,744.016666666667,0,472,0,0,0,960,0,0,0,,2006-09-28 00:00,,2007-05-15 08:01,2007-07-23 08:01,2007-04-04 17:00,2007-01-27 08:00,2007-04-04 17:00,2007-01-27 08:00,2007-04-04 17:00,2006-11-29 08:00,2007-04-24 17:00,,2007-05-15 08:01,2007-07-23 08:01,,PT_Normal,,,,,MWkIJJFOTu+EslUrRB5tVA,,,,N,0,0,,,2007-02-01 02:41,2007-02-04 01:00,hbe4678,hbe4678,2007-01-27 08:00,2007-04-04 17:00,472
139,12456320,14517,6815821,13329,1,100,N,N,N,CP_Units,TT_Task,DT_FixedDUR2,RV_OK,TK_Complete,PO000C0045,Purch/Fab/Deliver - Fencing Materials,,,,0,0,0,0,80,0,0,0,,2005-12-31 08:00,2006-01-14 17:00,2007-02-27 08:00,2007-02-27 08:00,,2007-01-27 00:00,2007-01-27 00:00,,,2005-12-31 08:00,2006-01-14 17:00,,,,,PT_Normal,,,,,W3cQEQg8QRGmqLR2/lPOCA,,,,N,0,0,,,2007-02-01 02:41,2007-02-04 01:05,hbe4678,hbe4678,,,0
140,12456321,14517,6815821,13329,0,100,N,N,N,CP_Units,TT_FinMile,DT_FixedDrtn,RV_OK,TK_Complete,PO000C0050,Receive at Site - Fencing Materials,,,,0,0,0,0,0,0,0,0,,2006-01-14 00:00,2006-01-14 00:00,2007-02-27 08:00,2007-02-27 08:00,,2007-01-27 00:00,2007-01-27 00:00,,,2006-03-11 17:00,2006-03-11 17:00,,,,,PT_Normal,,,,,bt30Q5eYRJKXrlrZkYPXQQ,,,,N,0,0,,,2007-02-01 02:41,2007-02-04 01:05,hbe4678,hbe4678,,,0
141,12456322,14517,6815821,13329,0,0,N,N,N,CP_Units,TT_FinMile,DT_FixedDUR2,RV_OK,TK_NotStart,PO02DS0000,02D Recv at Site - Structural Steel,,744.016666666667,0,0,0,0,0,0,0,0,0,,,,2007-08-20 08:01,2007-08-20 08:01,,2007-05-02 17:00,2007-05-02 17:00,2007-05-02 17:00,2007-05-02 17:00,2007-05-02 17:00,2007-05-02 17:00,,2007-08-20 08:01,2007-08-20 08:01,,PT_Normal,,,,,jrydMfyBRVu7pzr+mrbjZA,/F4xfn1Zykivsgf67sdtlx,,,N,0,0,,,2007-02-01 02:41,2007-02-04 01:00,hbe4678,hbe4678,2007-05-02 17:00,2007-05-02 17:00,0
142,12456323,14517,6815821,13329,0,0,N,N,N,CP_Units,TT_FinMile,DT_FixedDUR2,RV_OK,TK_NotStart,PO02DS0010,02D Recv at Site - Misc Steel,,840.016666666667,96,0,0,0,0,0,0,0,0,,,,2007-09-03 08:01,2007-09-03 08:01,,2007-05-02 17:00,2007-05-02 17:00,2007-05-02 17:00,2007-05-02 17:00,2007-05-02 17:00,2007-05-02 17:00,,2007-09-03 08:01,2007-09-03 08:01,,PT_Normal,,,,,rQnlH6g/RRa/GGIDP9TEGg,9r+C3qnyGUa0kzrTy/s2mR,,,N,0,0,,,2007-02-01 02:41,2007-02-04 01:00,hbe4678,hbe4678,2007-05-02 17:00,2007-05-02 17:00,0
143,12456324,14517,6815821,13329,1,0,N,N,N,CP_Units,TT_Task,DT_FixedDUR2,RV_OK,TK_Active,PO02DS0120,02D Fab & Ship Structural Steel,,744.016666666667,0,664,0,0,0,960,0,0,0,,2006-07-11 08:00,,2007-05-15 08:01,2007-08-20 08:01,2007-05-02 17:00,2007-01-27 08:00,2007-05-02 17:00,2007-01-27 08:00,2007-05-02 17:00,2006-07-11 08:00,2006-12-18 17:00,,2007-05-15 08:01,2007-08-20 08:01,,PT_Normal,,,,,gpCKeZMmRHixDVE5tzFYwQ,FI+veCZIYE2yT4wguq/jLB,,,N,0,0,,,2007-02-01 02:41,2007-02-04 01:00,hbe4678,hbe4678,2007-01-27 08:00,2007-05-02 17:00,664
144,12456325,14517,6815821,13329,1,0,N,N,N,CP_Units,TT_Task,DT_FixedDUR2,RV_OK,TK_Active,PO02DS0130,02D Fab & Ship Miscellaneous Steel,,840.016666666667,0,664,0,0,0,960,0,0,0,,2006-08-25 00:00,,2007-05-29 08:01,2007-09-03 08:01,2007-05-02 17:00,2007-01-27 08:00,2007-05-02 17:00,2007-01-27 08:00,2007-05-02 17:00,2006-10-07 08:00,2007-03-15 17:00,,2007-05-29 08:01,2007-09-03 08:01,,PT_Normal,,,,,jaLWG+GWR4in/2YP3CRifA,KGHB/R4STEmprYiO70ylZx,,,N,0,0,,,2007-02-01 02:41,2007-02-04 01:00,hbe4678,hbe4678,2007-01-27 08:00,2007-05-02 17:00,664
145,12456326,14517,6815821,13329,0,0,N,N,N,CP_Units,TT_FinMile,DT_FixedDUR2,RV_OK,TK_NotStart,PO02ES0000,02E Recv at Site - Structural Steel,,1016.01666666667,0,0,0,0,0,0,0,0,0,,,,2007-11-04 08:01,2007-11-04 08:01,,2007-05-16 17:00,2007-05-16 17:00,2007-05-16 17:00,2007-05-16 17:00,2007-05-16 17:00,2007-05-16 17:00,,2007-11-04 08:01,2007-11-04 08:01,,PT_Normal,,,,,x3HW6wkNTgiKTqQjTvFeig,3jMBntSyOky4k2U9b1kMsx,,,N,0,0,,,2007-02-01 02:41,2007-02-04 01:00,hbe4678,hbe4678,2007-05-16 17:00,2007-05-16 17:00,0
146,12456327,14517,6815821,13329,0,0,N,N,N,CP_Units,TT_FinMile,DT_FixedDUR2,RV_OK,TK_NotStart,PO02ES0010,02E Recv at Site - Misc Steel,,536.016666666667,0,0,0,0,0,0,0,0,0,,,,2007-08-04 08:01,2007-08-04 08:01,,2007-05-16 17:00,2007-05-16 17:00,2007-05-16 17:00,2007-05-16 17:00,2007-05-16 17:00,2007-05-16 17:00,,2007-08-04 08:01,2007-08-04 08:01,,PT_Normal,,,,,t0FYcvT1QlqB68KX69m8kA,0d/r0Ylo7Eep0prF0H2ItR,,,N,0,0,,,2007-02-01 02:41,2007-02-04 01:00,hbe4678,hbe4678,2007-05-16 17:00,2007-05-16 17:00,0
147,12456328,14517,6815821,13329,1,0,N,N,N,CP_Units,TT_Task,DT_FixedDUR2,RV_OK,TK_Active,PO02ES0120,02E Fab & Ship Structural Steel,,1016.01666666667,0,760,0,0,0,960,0,0,0,,2006-07-01 08:00,,2007-06-24 08:01,2007-11-04 08:01,2007-05-16 17:00,2007-01-27 08:00,2007-05-16 17:00,2007-01-27 08:00,2007-05-16 17:00,2006-07-01 08:00,2006-12-07 17:00,,2007-06-24 08:01,2007-11-04 08:01,,PT_Normal,,,,,btDjni10S5irKYjfC5gagA,6r7cAwi6zUiSihp5+cm6xB,,,N,0,0,,,2007-02-01 02:41,2007-02-04 01:00,hbe4678,hbe4678,2007-01-27 08:00,2007-05-16 17:00,760
148,12456329,14517,6815821,13329,1,0,N,N,N,CP_Units,TT_Task,DT_FixedDUR2,RV_OK,TK_Active,PO02ES0130,02E Fab & Ship Miscellaneous Steel,,536.016666666667,0,760,0,0,0,960,0,0,0,,2006-09-16 00:00,,2007-04-15 08:01,2007-08-04 08:01,2007-05-16 17:00,2007-01-27 08:00,2007-05-16 17:00,2007-01-27 08:00,2007-05-16 17:00,2006-10-28 08:00,2007-03-22 17:00,,2007-04-15 08:01,2007-08-04 08:01,,PT_Normal,,,,,WTKdPqMgSOWS22ZtNTa93A,aSqBH4wUW0CfbaLoVOESxB,,,N,0,0,,,2007-02-01 02:41,2007-02-04 01:00,hbe4678,hbe4678,2007-01-27 08:00,2007-05-16 17:00,760
149,12456330,14517,6815821,13329,0,0,N,N,N,CP_Units,TT_FinMile,DT_FixedDUR2,RV_OK,TK_NotStart,PO02FS0010,02F Recv at Site - Misc Steel,,1064.01666666667,0,0,0,0,0,0,0,0,0,,,,2007-11-11 08:01,2007-11-11 08:01,,2007-05-16 17:00,2007-05-16 17:00,2007-05-16 17:00,2007-05-16 17:00,2007-05-16 17:00,2007-05-16 17:00,,2007-11-11 08:01,2007-11-11 08:01,,PT_Normal,,,,,cOrjbis9RwOPBwSWJotKbQ,u60j2Iw2pUuYmCmtQR62iR,,,N,0,0,,,2007-02-01 02:41,2007-02-04 01:00,hbe4678,hbe4678,2007-05-16 17:00,2007-05-16 17:00,0
150,12456331,14517,6815821,13329,1,0,N,N,N,CP_Units,TT_Task,DT_FixedDUR2,RV_OK,TK_Active,PO02FS0130,02F Fab & Ship Miscellaneous Steel,,1064.01666666667,0,760,0,0,0,960,0,0,0,,2006-12-09 00:00,,2007-07-01 08:01,2007-11-11 08:01,2007-05-16 17:00,2007-01-27 08:00,2007-05-16 17:00,2007-01-27 08:00,2007-05-16 17:00,2007-02-11 08:00,2007-06-30 17:00,,2007-07-01 08:01,2007-11-11 08:01,,PT_Normal,,,,,r8akcSdUR/GgQ+oXE6m+XA,v/wMk075YUm5BVov/Wl87h,,,N,0,0,,,2007-02-01 02:41,2007-02-04 01:00,hbe4678,hbe4678,2007-01-27 08:00,2007-05-16 17:00,760
151,12456332,14517,6815821,13329,0,0,N,N,N,CP_Units,TT_FinMile,DT_FixedDUR2,RV_OK,TK_NotStart,PO02GS0010,02G Recv at Site - Misc Steel,,856.016666666667,0,0,0,0,0,0,0,0,0,,,,2007-08-29 08:01,2007-08-29 08:01,,2007-04-25 17:00,2007-04-25 17:00,2007-04-25 17:00,2007-04-25 17:00,2007-04-25 17:00,2007-04-25 17:00,,2007-08-29 08:01,2007-08-29 08:01,,PT_Normal,,,,,/E6+/LCAQyGqA5pph7LS3w,pmmyIVVn2Emeb4OYVIdPwR,,,N,0,0,,,2007-02-01 02:41,2007-02-04 01:05,hbe4678,hbe4678,2007-04-25 17:00,2007-04-25 17:00,0
152,12456333,14517,6815821,13329,1,0,N,N,N,CP_Units,TT_Task,DT_FixedDUR2,RV_OK,TK_Active,PO02GS0130,02G Fab & Ship Miscellaneous Steel,,856.016666666667,0,568,0,0,0,960,0,0,0,,2007-01-16 00:00,,2007-06-07 08:01,2007-08-29 08:01,2007-04-25 17:00,2007-02-03 08:00,2007-04-25 17:00,2007-02-03 08:00,2007-04-25 17:00,2007-02-03 08:00,2007-06-21 17:00,,2007-06-07 08:01,2007-08-29 08:01,,PT_Normal,,,,,+9+aXtWKR/6XvoKQjbS4Sw,qPhVa2iI60+Dv8Q7tYie5R,,,N,0,0,,,2007-02-01 02:41,2007-02-04 01:17,hbe4678,hbe4678,2007-02-03 08:00,2007-04-25 17:00,568
153,12456334,14517,6815821,13329,0,0,N,N,N,CP_Units,TT_FinMile,DT_FixedDUR2,RV_OK,TK_NotStart,PO02JS0000,02J Recv at Site - Structural Steel,,784.016666666667,0,0,0,0,0,0,0,0,0,,,,2007-09-09 08:01,2007-09-09 08:01,,2007-05-16 17:00,2007-05-16 17:00,2007-05-16 17:00,2007-05-16 17:00,2007-05-16 17:00,2007-05-16 17:00,,2007-09-09 08:01,2007-09-09 08:01,,PT_Normal,,,,,43OxAELpSP+U4sv8AaUPqw,LKrZRMwYz0WvMcIWVaykqh,,,N,0,0,,,2007-02-01 02:41,2007-02-04 01:00,hbe4678,hbe4678,2007-05-16 17:00,2007-05-16 17:00,0
154,12456335,14517,6815821,13330,1,100,N,N,N,CP_Units,TT_Task,DT_FixedDUR2,RV_OK,TK_Complete,PO020EL155,020 Issue E&I Cable/Bulks/JB Reqn (OCI),,,,0,0,0,0,120,0,0,0,2006-11-24 08:00,2006-11-01 00:00,2006-11-30 00:00,2007-06-03 17:00,2007-06-03 17:00,,2007-01-27 00:00,2007-01-27 00:00,,,2006-11-27 08:00,2006-12-15 17:00,,,,CS_MSOA,PT_Normal,,,,,YzBKvoRySjqzlwSyhxApig,,,,N,0,0,,,2007-02-01 02:41,2007-02-04 01:05,hbe4678,hbe4678,,,0
155,12456336,14517,6815821,13329,0,0,N,N,N,CP_Units,TT_FinMile,DT_FixedDUR2,RV_OK,TK_NotStart,PO02LS0000,02L Recv at Site - Structural Steel,,-119.983333333333,0,0,0,0,0,0,0,0,0,,,,2007-03-19 08:01,2007-03-19 08:01,,2007-04-04 17:00,2007-04-04 17:00,2007-04-04 17:00,2007-04-04 17:00,2007-04-04 17:00,2007-04-04 17:00,,2007-03-19 08:01,2007-03-19 08:01,,PT_Normal,,,,,f6AskkJJT2y2d0qstg184Q,,,,N,0,0,,,2007-02-01 02:41,2007-02-04 01:00,hbe4678,hbe4678,2007-04-04 17:00,2007-04-04 17:00,0
156,12456337,14517,6815821,13329,0,0,N,N,N,CP_Units,TT_FinMile,DT_FixedDUR2,RV_OK,TK_NotStart,PO02LS0010,02L Recv at Site - Misc Steel,,744.016666666667,432,0,0,0,0,0,0,0,0,,,,2007-07-23 08:01,2007-07-23 08:01,,2007-04-04 17:00,2007-04-04 17:00,2007-04-04 17:00,2007-04-04 17:00,2007-04-04 17:00,2007-04-04 17:00,,2007-07-23 08:01,2007-07-23 08:01,,PT_Normal,,,,,FKG6c21uTry+uuaXOFpUfg,,,,N,0,0,,,2007-02-01 02:41,2007-02-04 01:00,hbe4678,hbe4678,2007-04-04 17:00,2007-04-04 17:00,0
157,12456338,14517,6815821,13329,0,0,N,N,N,CP_Units,TT_FinMile,DT_FixedDUR2,RV_OK,TK_NotStart,PO02AS0000,02A Recv at Site - Structural Steel,,824.016666666667,0,0,0,0,0,0,0,0,0,,,,2007-09-08 08:01,2007-09-08 08:01,,2007-05-09 17:00,2007-05-09 17:00,2007-05-09 17:00,2007-05-09 17:00,2007-05-09 17:00,2007-05-09 17:00,,2007-09-08 08:01,2007-09-08 08:01,,PT_Normal,,,,,YuXMQMyCRUS8EuXJTzpqYw,x3wcFq8diU+rNDBtIAkMWR,,,N,0,0,,,2007-02-01 02:41,2007-02-04 01:00,hbe4678,hbe4678,2007-05-09 17:00,2007-05-09 17:00,0
158,12456339,14517,6815821,13329,0,0,N,N,N,CP_Units,TT_FinMile,DT_FixedDUR2,RV_OK,TK_NotStart,PO02AS0010,02A Recv at Site - Misc Steel,,920.016666666667,96,0,0,0,0,0,0,0,0,,,,2007-10-01 08:01,2007-10-01 08:01,,2007-05-09 17:00,2007-05-09 17:00,2007-05-09 17:00,2007-05-09 17:00,2007-05-09 17:00,2007-05-09 17:00,,2007-10-01 08:01,2007-10-01 08:01,,PT_Normal,,,,,S2NPymzNTM2Pttmu+JQloQ,5ylhF054N0iGC2sHJS/JVR,,,N,0,0,,,2007-02-01 02:41,2007-02-04 01:00,hbe4678,hbe4678,2007-05-09 17:00,2007-05-09 17:00,0
159,12456340,14517,6815821,13329,1,0,N,N,N,CP_Units,TT_Task,DT_FixedDUR2,RV_OK,TK_Active,PO02AS0120,02A Fab & Ship Structural Steel,,824.016666666667,0,712,0,0,0,960,0,0,0,,2006-07-27 08:00,,2007-05-27 08:01,2007-09-08 08:01,2007-05-09 17:00,2007-01-27 08:00,2007-05-09 17:00,2007-01-27 08:00,2007-05-09 17:00,2006-07-27 08:00,2007-01-10 17:00,,2007-05-27 08:01,2007-09-08 08:01,,PT_Normal,,,,,D6uXlNk/Sd6KEbZub+TF9Q,iZmc+7Lnx0K64U+vQ9RsUB,,,N,0,0,,,2007-02-01 02:41,2007-02-04 01:00,hbe4678,hbe4678,2007-01-27 08:00,2007-05-09 17:00,712
160,12456341,14517,6815821,13329,1,0,N,N,N,CP_Units,TT_Task,DT_FixedDUR2,RV_OK,TK_Active,PO02AS0130,02A Fab & Ship Miscellaneous Steel,,920.016666666667,0,712,0,0,0,960,0,0,0,,2006-09-09 00:00,,2007-06-10 08:01,2007-10-01 08:01,2007-05-09 17:00,2007-01-27 08:00,2007-05-09 17:00,2007-01-27 08:00,2007-05-09 17:00,2006-10-28 08:00,2007-03-22 17:00,,2007-06-10 08:01,2007-10-01 08:01,,PT_Normal,,,,,wXDoZZgdSXWwMOssjer5lA,3gnMw9EYIki+XB06svk5WR,,,N,0,0,,,2007-02-01 02:41,2007-02-04 01:00,hbe4678,hbe4678,2007-01-27 08:00,2007-05-09 17:00,712
161,12456342,14517,6815821,13329,1,0,N,N,N,CP_Units,TT_Task,DT_FixedDUR2,RV_OK,TK_Active,PO03FS0130,03F Fab & Ship Miscellaneous Steel,,704.016666666667,0,672,0,0,0,960,0,0,0,,2006-12-21 00:00,,2007-05-15 08:01,2007-08-21 08:01,2007-05-09 17:00,2007-02-01 08:00,2007-05-09 17:00,2007-02-01 08:00,2007-05-09 17:00,2007-02-01 08:00,2007-06-20 17:00,,2007-05-15 08:01,2007-08-21 08:01,,PT_Normal,,,,,6hlsyXrFSM23SovGwLHKew,usKT4knlK0maAguHgh/Hph,,,N,0,0,,,2007-02-01 02:41,2007-02-04 01:00,hbe4678,hbe4678,2007-02-01 08:00,2007-05-09 17:00,672
162,12456343,14517,6815821,13329,0,0,N,N,N,CP_Units,TT_FinMile,DT_FixedDUR2,RV_OK,TK_NotStart,PO03FS0010,03F Recv at Site - Misc Steel,,704.016666666667,0,0,0,0,0,0,0,0,0,,,,2007-08-21 08:01,2007-08-21 08:01,,2007-05-09 17:00,2007-05-09 17:00,2007-05-09 17:00,2007-05-09 17:00,2007-05-09 17:00,2007-05-09 17:00,,2007-08-21 08:01,2007-08-21 08:01,,PT_Normal,,,,,eBsnxngPQiixLTQtue5RfQ,NSOh7yI5DkqkvfRksEIOYB,,,N,0,0,,,2007-02-01 02:41,2007-02-04 01:00,hbe4678,hbe4678,2007-05-09 17:00,2007-05-09 17:00,0
163,12456344,14517,6815821,13329,1,100,N,N,N,CP_Units,TT_Task,DT_FixedDUR2,RV_OK,TK_Complete,PO000P0015,Purch/Fab/Delv - Temporary Testing Materials,,,,0,0,0,0,960,0,0,0,,2006-09-26 00:00,2006-10-31 00:00,2007-11-24 08:01,2007-11-24 08:01,,2007-01-27 00:00,2007-01-27 00:00,,,2006-09-23 08:00,2007-03-08 17:00,,,,,PT_Normal,,,,,K+FfYGe9RSaFTEM5IbAwUA,,,,N,0,0,,,2007-02-01 02:41,2007-02-04 01:05,hbe4678,hbe4678,,,0
164,12456345,14517,6815821,13329,0,100,N,N,N,CP_Units,TT_FinMile,DT_FixedDrtn,RV_OK,TK_Complete,PO000P0020,Receive at Site - Temporary Testing Materials,,,,0,0,0,0,0,0,0,0,,2006-10-31 00:00,2006-10-31 00:00,2007-11-24 08:01,2007-11-24 08:01,,2007-01-27 00:00,2007-01-27 00:00,,,2006-11-30 17:00,2006-11-30 17:00,,,,,PT_Normal,,,,,qcm0Clv4RHiHrlP2jB3yog,,,,N,0,0,,,2007-02-01 02:41,2007-02-04 01:05,hbe4678,hbe4678,,,0
165,12456346,14517,6815821,13329,0,0,N,N,N,CP_Units,TT_FinMile,DT_FixedDUR2,RV_OK,TK_NotStart,PO02NMS110,02N Recv at Site - Misc Steel,,536.016666666667,88,0,0,0,0,0,0,0,0,,,,2007-08-18 08:01,2007-08-18 08:01,,2007-05-30 17:00,2007-05-30 17:00,2007-05-30 17:00,2007-05-30 17:00,2007-05-30 17:00,2007-05-30 17:00,,2007-08-18 08:01,2007-08-18 08:01,,PT_Normal,,,,,JRlUvCRtT9eo5pMLtjgnmw,W9pPLW+fQ4+0TiCykjTrGg,,,N,0,0,,,2007-02-01 02:41,2007-02-04 01:00,hbe4678,hbe4678,2007-05-30 17:00,2007-05-30 17:00,0
166,12456347,14517,6815821,13329,1,0,N,N,N,CP_Units,TT_Task,DT_FixedDUR2,RV_OK,TK_Active,PO02NMS100,02N Fab & Ship Miscellaneous Steel,,536.016666666667,0,856,0,0,0,960,0,0,0,,2006-11-16 00:00,,2007-04-15 08:01,2007-08-18 08:01,2007-05-30 17:00,2007-01-27 08:00,2007-05-30 17:00,2007-01-27 08:00,2007-05-30 17:00,2006-10-04 08:00,2007-03-14 17:00,,2007-04-15 08:01,2007-08-18 08:01,,PT_Normal,,,,,mbg01GCyS92E8hXFsiELpQ,bDBB8jaSQ1+ri01m+X6fwQ,,,N,0,0,,,2007-02-01 02:41,2007-02-04 01:00,hbe4678,hbe4678,2007-01-27 08:00,2007-05-30 17:00,856
167,12456348,14517,6815821,13329,0,0,N,N,N,CP_Units,TT_FinMile,DT_FixedDUR2,RV_OK,TK_NotStart,PO02QMS110,02Q Recv at Site - Misc Steel,,968.016666666667,160,0,0,0,0,0,0,0,0,,,,2007-11-04 08:01,2007-11-04 08:01,,2007-05-23 17:00,2007-05-23 17:00,2007-05-23 17:00,2007-05-23 17:00,2007-05-23 17:00,2007-05-23 17:00,,2007-11-04 08:01,2007-11-04 08:01,,PT_Normal,,,,,2eqmX3UQQmC6wcO35hb5hQ,3/iGh+19y0yTXlB9PNqSfw,,,N,0,0,,,2007-02-01 02:41,2007-02-04 01:00,hbe4678,hbe4678,2007-05-23 17:00,2007-05-23 17:00,0
168,12456349,14517,6815821,13329,1,0,N,N,N,CP_Units,TT_Task,DT_FixedDUR2,RV_OK,TK_Active,PO02QMS100,02Q Fab & Ship Miscellaneous Steel,,968.016666666667,0,808,0,0,0,960,0,0,0,,2006-11-16 00:00,,2007-06-17 08:01,2007-11-04 08:01,2007-05-23 17:00,2007-01-27 08:00,2007-05-23 17:00,2007-01-27 08:00,2007-05-23 17:00,2006-10-04 08:00,2007-03-14 17:00,,2007-06-17 08:01,2007-11-04 08:01,,PT_Normal,,,,,x/st+eyiSSqJXJI+0LBFbA,sDZQFuZzPE+LQgs7NYilkg,,,N,0,0,,,2007-02-01 02:41,2007-02-04 01:00,hbe4678,hbe4678,2007-01-27 08:00,2007-05-23 17:00,808
169,12456350,14517,6815822,13329,1,0,N,N,N,CP_Units,TT_Task,DT_FixedDUR2,RV_OK,TK_Active,PO01EA0135,01E  Guard House Design Drawings - Submit to KBR,1352,1600,0,48,0,612,0,384,0,0,0,,2006-12-01 00:00,,2007-09-22 08:00,2007-10-03 17:00,2007-02-01 17:00,2007-01-27 08:00,2007-02-01 17:00,2007-01-27 08:00,2007-02-01 17:00,2007-01-20 08:00,2007-03-15 17:00,,2007-09-22 08:00,2007-10-03 17:00,,PT_Normal,,,,,zT9kAypURaKa8YXzm8CtFA,dgSm1UhaT4egGmFPvSozcQ,,,N,0,0,,,2007-02-01 02:41,2007-02-01 02:43,hbe4678,hbe4678,2007-01-27 08:00,2007-02-01 17:00,48
170,12456351,14517,6815822,13330,1,0,N,N,N,CP_Units,TT_Task,DT_FixedDUR2,RV_OK,TK_NotStart,EK01EA0140,01E Guard House Design Drawings - Approval,1352,1400.01666666667,0,80,0,612,0,56,0,0,0,,,,2007-10-05 08:01,2007-10-19 08:01,,2007-02-02 08:00,2007-02-15 17:00,2007-02-02 08:00,2007-02-15 17:00,2007-02-02 08:00,2007-02-12 17:00,,2007-10-05 08:01,2007-10-19 08:01,,PT_Normal,,,,,qWEFQZQrQvOoqt4fOQbKIA,Xl/wbFqAEEK2vW3yTubH9w,,,N,0,0,,,2007-02-01 02:41,2007-02-04 01:00,hbe4678,hbe4678,2007-02-02 08:00,2007-02-15 17:00,80
171,12456352,14517,6815822,13329,1,0,N,N,N,CP_Units,TT_Task,DT_FixedDUR2,RV_OK,TK_Active,PO01FA0135,01F Mosque Design Drawings - Submit to KBR,1352,1144.01666666667,0,48,0,612,0,384,0,0,0,,2006-12-01 00:00,,2007-07-12 08:01,2007-07-19 08:01,2007-02-01 17:00,2007-01-27 08:00,2007-02-01 17:00,2007-01-27 08:00,2007-02-01 17:00,2007-01-20 08:00,2007-03-15 17:00,,2007-07-12 08:01,2007-07-19 08:01,,PT_Normal,,,,,yXGuKXjKT0q0bJb8GAUQhA,Xl/wbFqAEEK2vW3yTubH9w,,,N,0,0,,,2007-02-01 02:41,2007-02-04 01:00,hbe4678,hbe4678,2007-01-27 08:00,2007-02-01 17:00,48
172,12456353,14517,6815822,13330,1,0,N,N,N,CP_Units,TT_Task,DT_FixedDUR2,RV_OK,TK_NotStart,EK01FA0140,01F Mosque Design Drawings - Approval,1352,952.016666666667,0,80,0,612,0,56,0,0,0,,,,2007-07-19 08:01,2007-08-02 08:01,,2007-02-02 08:00,2007-02-15 17:00,2007-02-02 08:00,2007-02-15 17:00,2007-02-02 08:00,2007-02-12 17:00,,2007-07-19 08:01,2007-08-02 08:01,,PT_Normal,,,,,N3AaCSIURQ2Wot4G9d2NAQ,SDX48tjiUk+jvADeoue1Ww,,,N,0,0,,,2007-02-01 02:41,2007-02-04 01:00,hbe4678,hbe4678,2007-02-02 08:00,2007-02-15 17:00,80
173,12456354,14517,6815828,13329,1,0,N,N,N,CP_Units,TT_Task,DT_FixedDUR2,RV_OK,TK_NotStart,CO05AC0185,05A Procure Material & Mob Piling Contractor,,-407.983333333333,0,96,0,0,0,96,0,0,0,,,,2006-12-12 08:01,2006-12-26 08:01,,2007-02-17 08:00,2007-03-01 17:00,2007-02-17 08:00,2007-03-01 17:00,2007-02-17 08:00,2007-03-01 17:00,,2006-12-12 08:01,2006-12-26 08:01,,PT_Normal,,,,,8t5Y1J/FRV2VB4WbiT3p5g,ZvreTq1Epk2hVUU78yyOlQ,,,Y,0,0,,,2007-02-01 02:41,2007-02-04 01:05,hbe4678,hbe4678,2007-02-17 08:00,2007-03-01 17:00,96
174,12456355,14517,6815828,13329,1,0,N,N,N,CP_Units,TT_Task,DT_FixedDUR2,RV_OK,TK_NotStart,EK05ACV210,05A COSMO Design Approval (Assuming No Change),,-407.983333333333,0,48,0,0,0,112,0,0,0,,,,2006-12-05 08:01,2006-12-12 08:01,,2007-02-10 08:00,2007-02-15 17:00,2007-02-10 08:00,2007-02-15 17:00,2007-02-10 08:00,2007-02-25 17:00,,2006-12-05 08:01,2006-12-12 08:01,,PT_Normal,,,,,beTv2bUeTAiFxCpv88LsqA,Dg2nKLZRvEClZatlxXsrHw,,,Y,0,0,,,2007-02-01 02:41,2007-02-04 01:05,hbe4678,hbe4678,2007-02-10 08:00,2007-02-15 17:00,48
175,12456356,14517,6815828,13329,1,0,N,N,N,CP_Units,TT_Task,DT_FixedDUR2,RV_OK,TK_Active,CO05AC0175,05A Test Piles (Load Test),,-407.983333333333,0,96,0,0,0,288,0,0,0,,2006-12-28 00:00,,2006-11-21 08:01,2006-12-05 08:01,2007-02-08 17:00,2007-01-27 08:00,2007-02-08 17:00,2007-01-27 08:00,2007-02-08 17:00,2007-01-13 08:00,2007-02-22 17:00,,2006-11-21 08:01,2006-12-05 08:01,,PT_Normal,,,,,YytoEYOmRECDxj849mrR2g,Cla1Dapq+0OVOduZj48xzw,,,Y,0,0,,,2007-02-01 02:41,2007-02-04 01:05,hbe4678,hbe4678,2007-01-27 08:00,2007-02-08 17:00,96
176,12456357,14517,6815828,13329,1,100,N,N,N,CP_Units,TT_Task,DT_FixedDUR2,RV_OK,TK_Complete,CO05AC0170,05A Install Test Piles,,,,0,0,0,0,72,0,0,0,,2006-12-16 00:00,2006-12-27 00:00,2006-11-21 08:01,2006-11-21 08:01,,2007-01-27 00:00,2007-01-27 00:00,,,2007-06-11 08:00,2007-06-20 17:00,,,,,PT_Normal,,,,,d6FP6K55Q8isUaND+EemWA,7lkedEC7L0q/u/wEZQNyww,,,Y,0,0,,,2007-02-01 02:41,2007-02-04 01:05,hbe4678,hbe4678,,,0
177,12456358,14517,6815830,13329,1,0,N,N,N,CP_Units,TT_Task,DT_FixedDUR2,RV_OK,TK_NotStart,CO05AS0110,05A Erect Structural Steel -  Structure,,184,0,80,0,0,0,80,0,0,0,,,,2007-09-04 08:01,2007-09-19 08:01,,2007-08-08 08:01,2007-08-20 08:01,2007-08-08 08:01,2007-08-20 08:01,2007-08-08 08:01,2007-08-20 08:01,,2007-09-04 08:01,2007-09-19 08:01,,PT_Normal,,,,,yCASlrGTTdmrMOhN7PtjCQ,RrevEuAYa0a+LRqcfC3u1h,,,N,0,0,,,2007-02-01 02:41,2007-02-04 01:02,hbe4678,hbe4678,2007-08-08 08:01,2007-08-20 08:01,80
178,12456359,14517,6815830,13329,1,0,N,N,N,CP_Units,TT_Task,DT_FixedDUR2,RV_OK,TK_NotStart,CO05AS0120,05A Erect Misc Steel,,184,415.983333333333,48,0,0,0,48,0,0,0,,,,2007-10-24 08:01,2007-10-31 08:01,,2007-09-05 08:01,2007-09-12 08:01,2007-09-05 08:01,2007-09-12 08:01,2007-09-05 08:01,2007-09-12 08:01,,2007-10-24 08:01,2007-10-31 08:01,,PT_Normal,,,,,Urn2uy83SzynP4037ghb0g,KJK0I7xQ60+umgwPwE0sXB,,,N,0,0,,,2007-02-01 02:41,2007-02-04 01:02,hbe4678,hbe4678,2007-09-05 08:01,2007-09-12 08:01,48
179,12456360,14517,6815830,13329,1,0,N,N,N,CP_Units,TT_WBS,DT_FixedDUR2,RV_OK,TK_NotStart,WO050S0100,050 Erect Steel,1353,184,3791.98333333333,240,0,12659.41,12659.41,240,0,0,0,,,,2007-09-04 08:01,2007-10-31 08:01,,2007-08-08 08:01,2007-09-12 08:01,2007-08-08 08:01,2007-09-12 08:01,2007-08-08 08:01,2007-09-12 08:01,,2007-09-04 08:01,2007-10-31 08:01,,PT_Normal,,,,,VcqqKFvRSyKILccUeR8KyQ,UUECQec8vUuCrXEaLI4WYB,,,N,0,0,,,2007-02-01 02:41,2007-02-04 01:05,hbe4678,hbe4678,2007-08-08 08:01,2007-09-12 08:01,240
180,12456361,14517,6815831,13329,0,0,N,N,N,CP_Units,TT_FinMile,DT_FixedDUR2,RV_OK,TK_NotStart,CO05AT0110,05A Mechanical Completion,,-375.983333333333,32,0,0,0,0,0,0,0,0,,,,2008-04-12 08:01,2008-04-12 08:01,,2008-06-04 17:00,2008-06-04 17:00,2008-06-04 17:00,2008-06-04 17:00,2008-06-04 17:00,2008-06-04 17:00,,2008-04-12 08:01,2008-04-12 08:01,,PT_Normal,,,,,oXug9XeHQyKiz9JHESfk1Q,UOhpqxqps024+O4t0TGPjR,,,N,0,0,,,2007-02-01 02:41,2007-02-04 01:00,hbe4678,hbe4678,2008-06-04 17:00,2008-06-04 17:00,0
181,12456362,14517,6815831,13332,0,0,N,N,N,CP_Units,TT_FinMile,DT_FixedDUR2,RV_OK,TK_NotStart,SC05AT0120,05A RFSU,,-471.983333333333,0,0,0,0,0,0,0,0,0,,,,2008-04-12 08:01,2008-04-12 08:01,,2008-06-09 17:00,2008-06-09 17:00,2008-06-09 17:00,2008-06-09 17:00,2008-06-09 17:00,2008-06-09 17:00,,2008-04-12 08:01,2008-04-12 08:01,,PT_Normal,,,,,VvDh+7UiRzO88XGcWlkzEA,CW+Mh63OzU+x4j9JOzR+3h,,,Y,0,0,,,2007-02-01 02:41,2007-02-04 01:05,hbe4678,hbe4678,2008-06-09 17:00,2008-06-09 17:00,0
182,12456363,14517,6815831,13329,0,0,N,N,N,CP_Units,TT_FinMile,DT_FixedDUR2,RV_OK,TK_NotStart,CO05BT0110,05B Mechanical Completion,,648,152,0,0,0,0,0,0,0,0,,,,2008-05-27 08:01,2008-05-27 08:01,,2008-02-23 08:01,2008-02-23 08:01,2008-02-23 08:01,2008-02-23 08:01,2008-02-23 08:01,2008-02-23 08:01,,2008-05-27 08:01,2008-05-27 08:01,,PT_Normal,,,,,jDpexkJHRo+fTOkSjJh71w,OAtQ3DessUGewgZQQtPbjB,,,N,0,0,,,2007-02-01 02:41,2007-02-01 02:43,hbe4678,hbe4678,2008-02-23 08:01,2008-02-23 08:01,0
183,12456364,14517,6815831,13332,0,0,N,N,N,CP_Units,TT_FinMile,DT_FixedDUR2,RV_OK,TK_NotStart,SC05BT0120,05B RFSU,,576,1047.98333333333,0,0,0,0,0,0,0,0,,,,2008-05-27 08:01,2008-05-27 08:01,,2008-03-16 08:01,2008-03-16 08:01,2008-03-16 08:01,2008-03-16 08:01,2008-03-16 08:01,2008-03-16 08:01,,2008-05-27 08:01,2008-05-27 08:01,,PT_Normal,,,,,iYFnj489SGuNdiVrnQZFAA,WhfP0tSDBUaav+n7VP2Odx,,,N,0,0,,,2007-02-01 02:41,2007-02-04 01:00,hbe4678,hbe4678,2008-03-16 08:01,2008-03-16 08:01,0
184,12456365,14517,6815832,13329,1,0,N,N,N,CP_Units,TT_Task,DT_FixedDUR2,RV_OK,TK_NotStart,CO05AU3110,05A U/G Earthing Installation,,616.016666666667,896,192,0,0,0,192,0,0,0,,,,2007-11-06 08:01,2007-12-04 08:01,,2007-07-17 08:00,2007-08-13 17:00,2007-07-17 08:00,2007-08-13 17:00,2007-07-17 08:00,2007-08-13 17:00,,2007-11-06 08:01,2007-12-04 08:01,,PT_Normal,,,,,0pgiaAWTR5+iczZl3OalPw,sZSOiIAYjU+XYld7FV0Ttx,,,N,0,0,,,2007-02-01 02:41,2007-02-04 01:00,hbe4678,hbe4678,2007-07-17 08:00,2007-08-13 17:00,192
185,12456366,14517,6815832,13329,1,0,N,N,N,CP_Units,TT_WBS,DT_FixedDUR2,RV_OK,TK_NotStart,WO050U3100,050 Install U/G Electrical,1348,616.016666666667,3992,192,0,9381.82,9381.82,192,0,0,0,,,,2007-11-06 08:01,2007-12-04 08:01,,2007-07-17 08:00,2007-08-13 17:00,2007-07-17 08:00,2007-08-13 17:00,2007-07-17 08:00,2007-08-13 17:00,,2007-11-06 08:01,2007-12-04 08:01,,PT_Normal,,,,,87Z+fTxvR22nmnvlxz3WJQ,u6UYq8pSfEC63Pji2ODZ0R,,,N,0,0,,,2007-02-01 02:41,2007-02-04 01:05,hbe4678,hbe4678,2007-07-17 08:00,2007-08-13 17:00,192
186,12456367,14517,6815833,13329,1,0,N,N,N,CP_Units,TT_Task,DT_FixedDUR2,RV_OK,TK_NotStart,CO05AU4120,05A U/G Piping Installation,,616.016666666667,0,384,0,0,0,384,0,0,0,,,,2007-09-10 08:01,2007-11-27 08:01,,2007-06-12 08:00,2007-08-06 17:00,2007-06-12 08:00,2007-08-06 17:00,2007-06-12 08:00,2007-08-06 17:00,,2007-09-10 08:01,2007-11-27 08:01,,PT_Normal,,,,,QfUKRwayT/ylmrrSan+04w,4pkbEpGKeUO6ITJcwZ4A6h,,,N,0,0,,,2007-02-01 02:41,2007-02-04 01:00,hbe4678,hbe4678,2007-06-12 08:00,2007-08-06 17:00,384
187,12456368,14517,6815833,13329,1,0,N,N,N,CP_Units,TT_WBS,DT_FixedDUR2,RV_OK,TK_NotStart,WO050U4100,050 U/G Piping Installation,1348,1080.01666666667,3608,816,0,28591.79,28591.79,816,0,0,0,,,,2007-09-10 08:01,2008-04-12 08:01,,2007-06-12 08:00,2007-10-30 17:00,2007-06-12 08:00,2007-10-30 17:00,2007-06-12 08:00,2007-10-30 17:00,,2007-09-10 08:01,2008-04-12 08:01,,PT_Normal,,,,,I+56WVONQYK9Nq1ybWa77w,WOn+jNLgik6zAVeRw6Q2Gx,,,N,0,0,,,2007-02-01 02:41,2007-02-04 01:05,hbe4678,hbe4678,2007-06-12 08:00,2007-10-30 17:00,816
188,12456369,14517,6815833,13329,1,0,N,N,N,CP_Units,TT_Task,DT_FixedDUR2,RV_OK,TK_NotStart,CO05UP0150,05U LB Pipe Erection (Firewater Piping),,1080.01666666667,1456,576,0,0,0,576,0,0,0,,,,2008-01-19 08:01,2008-04-12 08:01,,2007-07-17 08:00,2007-10-30 17:00,2007-07-17 08:00,2007-10-30 17:00,2007-07-17 08:00,2007-10-30 17:00,,2008-01-19 08:01,2008-04-12 08:01,,PT_Normal,,,,,95uFmV67RkaoYmMNNACAAQ,SO4mOnUe20i2WzsKD/zsKB,,,N,0,0,,,2007-02-01 02:41,2007-02-04 01:00,hbe4678,hbe4678,2007-07-17 08:00,2007-10-30 17:00,576
189,12456370,14517,6815834,13329,1,0,N,N,N,CP_Units,TT_Task,DT_FixedDUR2,RV_OK,TK_Active,CO05AV1110,05A Paint Fabricated Pipe Spools,,1328.01666666667,1560,232,0,0,0,232,0,0,0,,2006-11-23 00:00,,2008-01-12 08:01,2008-02-14 08:01,,2007-06-04 08:00,2007-07-07 17:00,2007-06-04 08:00,2007-07-07 17:00,2007-01-06 08:00,2007-02-07 17:00,,2008-01-12 08:01,2008-02-14 08:01,,PT_Normal,,,,,A+5a92B/RrSvyShKnEimag,PRKPZl1rAka6ikDr37k7cR,,,N,0,0,,,2007-02-01 02:41,2007-02-04 01:00,hbe4678,hbe4678,2007-06-04 08:00,2007-07-07 17:00,232
190,12456371,14517,6815834,13329,1,0,N,N,N,CP_Units,TT_Task,DT_FixedDUR2,RV_OK,TK_NotStart,CO05AV1120,05A Paint Touch-up - Piping,,-15.9833333333333,360,232,0,0,0,232,0,0,0,,,,2008-03-09 08:01,2008-04-12 08:01,,2008-03-11 08:00,2008-04-13 17:00,2008-03-11 08:00,2008-04-13 17:00,2008-03-11 08:00,2008-04-13 17:00,,2008-03-09 08:01,2008-04-12 08:01,,PT_Normal,,,,,uSAQqzE0QaKjlSVgY+r1ww,r3qHyg+ti02kCVikbl4Jsh,,,N,0,0,,,2007-02-01 02:41,2007-02-04 01:00,hbe4678,hbe4678,2008-03-11 08:00,2008-04-13 17:00,232
191,12456372,14517,6815834,13329,1,0,N,N,N,CP_Units,TT_Task,DT_FixedDUR2,RV_OK,TK_NotStart,CO05AV1130,05A Paint Touch-up - Equipment,,-407.983333333333,0,232,0,0,0,232,0,0,0,,,,2008-02-10 08:01,2008-03-15 08:01,,2008-04-09 08:00,2008-05-12 17:00,2008-04-09 08:00,2008-05-12 17:00,2008-04-09 08:00,2008-05-12 17:00,,2008-02-10 08:01,2008-03-15 08:01,,PT_Normal,,,,,pZfd/YQTSeienn/OG2AILQ,AI+jG/XhD0Genoq2gjhKGB,,,Y,0,0,,,2007-02-01 02:41,2007-02-04 01:05,hbe4678,hbe4678,2008-04-09 08:00,2008-05-12 17:00,232
192,12456373,14517,6815834,13329,1,0,N,N,N,CP_Units,TT_WBS,DT_FixedDUR2,RV_OK,TK_Active,WO050V1100,050 Paint,1340,96.0166666666667,2312,2168,13.02,29752.44,29765.46,3192,0,0,0,,2006-11-23 00:00,,2008-01-12 08:01,2008-05-27 08:01,,2007-06-04 08:00,2008-05-12 17:00,2007-06-04 08:00,2008-05-12 17:00,2007-01-06 08:00,2008-05-12 17:00,,2008-01-12 08:01,2008-05-27 08:01,,PT_Normal,,,,,byH/1jANSqii76Pj409bTA,okz5sjoJ+UuG7kNoeWRt7B,,,N,0,0,,,2007-02-01 02:41,2007-02-04 01:05,hbe4678,hbe4678,2007-06-04 08:00,2008-05-12 17:00,2168
193,12456374,14517,6815834,13329,1,0,N,N,N,CP_Units,TT_Task,DT_FixedDUR2,RV_OK,TK_NotStart,CO05BV1110,05B Paint Fabricated Pipe Spools,,1712.01666666667,496,64,0,0,0,64,0,0,0,,,,2008-04-01 08:01,2008-04-10 08:01,,2007-06-28 08:00,2007-07-07 17:00,2007-06-28 08:00,2007-07-07 17:00,2007-06-28 08:00,2007-07-07 17:00,,2008-04-01 08:01,2008-04-10 08:01,,PT_Normal,,,,,bV1lQRhbStyjKVlP6ovwJQ,Gef1pr4RGkSF0EEZVzZ6oR,,,N,0,0,,,2007-02-01 02:41,2007-02-04 01:00,hbe4678,hbe4678,2007-06-28 08:00,2007-07-07 17:00,64
194,12456375,14517,6815834,13329,1,0,N,N,N,CP_Units,TT_Task,DT_FixedDUR2,RV_OK,TK_NotStart,CO05BV1120,05B Paint Touch-up - Piping,,1360.01666666667,712.016666666667,64,0,0,0,64,0,0,0,,,,2008-05-18 08:01,2008-05-27 08:01,,2007-10-27 08:00,2007-11-04 17:00,2007-10-27 08:00,2007-11-04 17:00,2007-10-27 08:00,2007-11-04 17:00,,2008-05-18 08:01,2008-05-27 08:01,,PT_Normal,,,,,TqtMVkXcRIObUe+RgI9tdg,Fkut/XNWpEqpZWD6nBQzOx,,,N,0,0,,,2007-02-01 02:41,2007-02-04 01:00,hbe4678,hbe4678,2007-10-27 08:00,2007-11-04 17:00,64
195,12456376,14517,6815834,13329,1,0,N,N,N,CP_Units,TT_Task,DT_FixedDUR2,RV_OK,TK_NotStart,CO05BV1130,05B Paint Touch-up - Equipment,,496,0,64,0,0,0,64,0,0,0,,,,2008-04-20 08:01,2008-04-29 08:01,,2008-02-07 08:01,2008-02-17 08:01,2008-02-07 08:01,2008-02-17 08:01,2008-02-07 08:01,2008-02-17 08:01,,2008-04-20 08:01,2008-04-29 08:01,,PT_Normal,,,,,67kXlN5uT4+U5a1tkj4OLA,8cRzdkjgX0S+EHGnQayiRB,,,N,0,0,,,2007-02-01 02:41,2007-02-01 02:43,hbe4678,hbe4678,2008-02-07 08:01,2008-02-17 08:01,64
196,12456377,14517,6815835,13329,1,0,N,N,N,CP_Units,TT_WBS,DT_FixedDUR2,RV_OK,TK_NotStart,WO050V2100,050 Insulation,1340,-95.9833333333333,2120,743.983333333333,0,18872.98,18872.98,743.983333333333,0,0,0,,,,2008-02-27 08:01,2008-05-27 08:01,,2008-02-23 08:01,2008-06-09 17:00,2008-02-23 08:01,2008-06-09 17:00,2008-02-23 08:01,2008-06-09 17:00,,2008-02-27 08:01,2008-05-27 08:01,,PT_Normal,,,,,SS36C8WMSVW/7BuLue4QLg,Gsgs3e8/K0arnAvJWgH16h,,,N,0,0,,,2007-02-01 02:41,2007-02-04 01:05,hbe4678,hbe4678,2008-02-23 08:01,2008-06-09 17:00,743.983333333333
197,12456378,14517,6815835,13329,1,0,N,N,N,CP_Units,TT_Task,DT_FixedDUR2,RV_OK,TK_NotStart,CO05BV2110,05B Insulate - Equipment,,496,0,144,0,0,0,144,0,0,0,,,,2008-05-06 08:01,2008-05-27 08:01,,2008-02-24 08:01,2008-03-16 08:01,2008-02-24 08:01,2008-03-16 08:01,2008-02-24 08:01,2008-03-16 08:01,,2008-05-06 08:01,2008-05-27 08:01,,PT_Normal,,,,,mXr1GIN7SwOyzmYyntMN7Q,/N06azHmB0ylQiVf68121h,,,N,0,0,,,2007-02-01 02:41,2007-02-01 02:43,hbe4678,hbe4678,2008-02-24 08:01,2008-03-16 08:01,144
198,12456379,14517,6815835,13329,1,0,N,N,N,CP_Units,TT_Task,DT_FixedDUR2,RV_OK,TK_NotStart,CO05BV2120,05B Insulate - Piping,,504,8,144,0,0,0,144,0,0,0,,,,2008-05-06 08:01,2008-05-27 08:01,,2008-02-23 08:01,2008-03-15 08:01,2008-02-23 08:01,2008-03-15 08:01,2008-02-23 08:01,2008-03-15 08:01,,2008-05-06 08:01,2008-05-27 08:01,,PT_Normal,,,,,oOjSPfgUSA6vI+ROGM6o4Q,HZ69FHLwWE+pk5jwMh0D3x,,,N,0,0,,,2007-02-01 02:41,2007-02-01 02:43,hbe4678,hbe4678,2008-02-23 08:01,2008-03-15 08:01,144
199,12456380,14517,6815835,13329,1,0,N,N,N,CP_Units,TT_Task,DT_FixedDUR2,RV_OK,TK_NotStart,CO06AV2110,05A Insulate - Equipment,,-407.983333333333,0,304,0,0,0,304,0,0,0,,,,2008-02-27 08:01,2008-04-12 08:01,,2008-04-27 08:00,2008-06-09 17:00,2008-04-27 08:00,2008-06-09 17:00,2008-04-27 08:00,2008-06-09 17:00,,2008-02-27 08:01,2008-04-12 08:01,,PT_Normal,,,,,N5IRj0X3SvqF9bzlAg9AzA,/N06azHmB0ylQiVf68121h,,,Y,0,0,,,2007-02-01 02:41,2007-02-04 01:05,hbe4678,hbe4678,2008-04-27 08:00,2008-06-09 17:00,304
200,12456381,14517,6815835,13329,1,0,N,N,N,CP_Units,TT_Task,DT_FixedDUR2,RV_OK,TK_NotStart,CO06AV2120,05A Insulate - Piping,,-207.983333333333,200,304,0,0,0,304,0,0,0,,,,2008-02-27 08:01,2008-04-12 08:01,,2008-03-29 08:00,2008-05-11 17:00,2008-03-29 08:00,2008-05-11 17:00,2008-03-29 08:00,2008-05-11 17:00,,2008-02-27 08:01,2008-04-12 08:01,,PT_Normal,,,,,1btanDM1R7+9Jz0HcHtZ3Q,HZ69FHLwWE+pk5jwMh0D3x,,,N,0,0,,,2007-02-01 02:41,2007-02-04 01:00,hbe4678,hbe4678,2008-03-29 08:00,2008-05-11 17:00,304
201,12456382,14517,6815835,13329,1,0,N,N,N,CP_Units,TT_Task,DT_FixedDUR2,RV_OK,TK_NotStart,CO05AV2110,05A Insulate - Equipment,,-407.983333333333,0,304,0,0,0,304,0,0,0,,,,2008-02-27 08:01,2008-04-12 08:01,,2008-04-27 08:00,2008-06-09 17:00,2008-04-27 08:00,2008-06-09 17:00,2008-04-27 08:00,2008-06-09 17:00,,2008-02-27 08:01,2008-04-12 08:01,,PT_Normal,,,,,9HXivYNBRA6WT2yj2Pmzdw,z9gpppo6N0SSwo4ikbhdDR,,,Y,0,0,,,2007-02-01 02:41,2007-02-04 01:05,hbe4678,hbe4678,2008-04-27 08:00,2008-06-09 17:00,304
202,12456383,14517,6815835,13329,1,0,N,N,N,CP_Units,TT_Task,DT_FixedDUR2,RV_OK,TK_NotStart,CO05AV2120,05A Insulate - Piping,,-207.983333333333,200,304,0,0,0,304,0,0,0,,,,2008-02-27 08:01,2008-04-12 08:01,,2008-03-29 08:00,2008-05-11 17:00,2008-03-29 08:00,2008-05-11 17:00,2008-03-29 08:00,2008-05-11 17:00,,2008-02-27 08:01,2008-04-12 08:01,,PT_Normal,,,,,LMtRSpLJQGunnDl3Xvp5rA,IRCknoNNQUOnBYl7o+CC2x,,,N,0,0,,,2007-02-01 02:41,2007-02-04 01:00,hbe4678,hbe4678,2008-03-29 08:00,2008-05-11 17:00,304
203,12456384,14517,6815837,13329,1,0,N,N,N,CP_Units,TT_Task,DT_FixedDUR2,RV_OK,TK_NotStart,CO05BA0110,05B Erect Dock Control Operating Building,1352,1080,0,192,0,900,0,152.016667,0,0,0,,,,2008-04-01 08:01,2008-04-29 08:01,,2007-10-21 08:01,2007-11-18 08:01,2007-10-21 08:01,2007-11-18 08:01,2007-10-21 08:01,2007-11-12 08:02,,2008-04-01 08:01,2008-04-29 08:01,,PT_Normal,,,,,7UIWPnqRS125hGXKyiVShA,RVdQ5M4YIUCLfkKPJoMG2x,,,N,0,0,,,2007-02-01 02:41,2007-02-01 02:43,hbe4678,hbe4678,2007-10-21 08:01,2007-11-18 08:01,192
204,12456385,14517,6815837,13329,1,0,N,N,N,CP_Units,TT_WBS,DT_FixedDUR2,RV_OK,TK_NotStart,WO050A0100,050 Buildings,1352,1080,3487.98333333333,192,0,1286.54,1286.54,152.016666666667,0,0,0,,,,2008-04-01 08:01,2008-04-29 08:01,,2007-10-21 08:01,2007-11-18 08:01,2007-10-21 08:01,2007-11-18 08:01,2007-10-21 08:01,2007-11-12 08:02,,2008-04-01 08:01,2008-04-29 08:01,,PT_Normal,,,,,OaF6AAwsQb6jkyvbZmq2lA,BcdP/pWHaEi91DedFxYsCB,,,N,0,0,,,2007-02-01 02:41,2007-02-04 01:05,hbe4678,hbe4678,2007-10-21 08:01,2007-11-18 08:01,192
205,12456386,14517,6815838,13329,1,0,N,N,N,CP_Units,TT_Task,DT_FixedDUR2,RV_OK,TK_NotStart,CO05AC0110,"05A Form, Pour, Strip Fnds - Major Fnds Gen'l",,616.016666666667,0,144,0,0,0,144,0,0,0,,,,2007-11-06 08:01,2007-11-27 08:01,,2007-07-17 08:00,2007-08-06 17:00,2007-07-17 08:00,2007-08-06 17:00,2007-07-17 08:00,2007-08-06 17:00,,2007-11-06 08:01,2007-11-27 08:01,,PT_Normal,,,,,dSsfGw1FR+Gl8sqosIKGpw,D96GCBIDKkSPOF539cEg4R,,,N,0,0,,,2007-02-01 02:41,2007-02-04 01:00,hbe4678,hbe4678,2007-07-17 08:00,2007-08-06 17:00,144
206,12456387,14517,6815838,13329,1,0,N,N,N,CP_Units,TT_Task,DT_FixedDUR2,RV_OK,TK_NotStart,CO05AC0120,"05A Form, Pour, Strip Fnds - Sleeper & Rack",,352.016666666667,0,240,0,0,0,240,0,0,0,,,,2007-07-31 08:01,2007-09-04 08:01,,2007-06-10 08:00,2007-07-14 17:00,2007-06-10 08:00,2007-07-14 17:00,2007-06-10 08:00,2007-07-14 17:00,,2007-07-31 08:01,2007-09-04 08:01,,PT_Normal,,,,,0wxFg0N4R365skk23AwrkA,v0rCsa4eGUWJDO2SQnBeUR,,,N,0,0,,,2007-02-01 02:41,2007-02-04 01:00,hbe4678,hbe4678,2007-06-10 08:00,2007-07-14 17:00,240
207,12456388,14517,6815838,13329,1,0,N,N,N,CP_Units,TT_Task,DT_FixedDUR2,RV_OK,TK_NotStart,CO05AC0160,"05A Form, Pour, Strip Fnd - 2101-F Ammonia Tank",,-407.983333333333,0,400,0,0,0,400,0,0,0,,,,2007-03-21 08:01,2007-05-19 08:01,,2007-05-20 08:00,2007-07-16 17:00,2007-05-20 08:00,2007-07-16 17:00,2007-05-20 08:00,2007-07-16 17:00,,2007-03-21 08:01,2007-05-19 08:01,,PT_Normal,,,,,BOK8QhtAQSicyvv35rbxBA,6CBZW0zS5kWiSRssY/4pmB,,,Y,0,0,,,2007-02-01 02:41,2007-02-04 01:05,hbe4678,hbe4678,2007-05-20 08:00,2007-07-16 17:00,400
208,12456389,14517,6815838,13329,1,0,N,N,N,CP_Units,TT_WBS,DT_FixedDUR2,RV_OK,TK_NotStart,WO050C0100,050 Concrete & Excavation,1355,1216.01666666667,3880,1240,0,1144703.67,1144703.67,1160,0,0,0,,,,2006-12-26 08:01,2008-03-23 08:01,,2007-03-03 08:00,2007-08-29 17:00,2007-03-03 08:00,2007-08-29 17:00,2007-03-03 08:00,2007-08-18 17:00,,2006-12-26 08:01,2008-03-23 08:01,,PT_Normal,,,,,u1og8RbsQVuiyeRU3SygJg,8amve+mNnkuBqpLjCNHPOx,,,N,0,0,,,2007-02-01 02:41,2007-02-04 01:05,hbe4678,hbe4678,2007-03-03 08:00,2007-08-29 17:00,1240
209,12456390,14517,6815838,13329,1,0,N,N,N,CP_Units,TT_Task,DT_FixedDUR2,RV_OK,TK_NotStart,CO05BC0110,"05B Form, Pour, Strip Fnds - Sleepers",,1216.01666666667,0,320,0,0,0,240,0,0,0,,,,2008-02-05 08:01,2008-03-23 08:01,,2007-07-15 08:00,2007-08-29 17:00,2007-07-15 08:00,2007-08-29 17:00,2007-07-15 08:00,2007-08-18 17:00,,2008-02-05 08:01,2008-03-23 08:01,,PT_Normal,,,,,fN93SepCTbyVczX3v7RQZg,9UMS7dLVHEqrBlpr6gDGZx,,,N,0,0,,,2007-02-01 02:41,2007-02-04 01:00,hbe4678,hbe4678,2007-07-15 08:00,2007-08-29 17:00,320
210,12456391,14517,6815838,13329,1,0,N,N,N,CP_Units,TT_Task,DT_FixedDUR2,RV_OK,TK_NotStart,CO05AC0165,"05A Form, Pour, Strip Fnd - 2102-F Ammonia Tank",,-319.983333333333,0,400,0,0,0,400,0,0,0,,,,2007-04-03 08:01,2007-05-31 08:01,,2007-05-20 08:00,2007-07-16 17:00,2007-05-20 08:00,2007-07-16 17:00,2007-05-20 08:00,2007-07-16 17:00,,2007-04-03 08:01,2007-05-31 08:01,,PT_Normal,,,,,Qks2G1wwTu+HAGfkiHo0Sw,sJI8ZXFnskOTgWUnFKMVQx,,,N,0,0,,,2007-02-01 02:41,2007-02-04 01:00,hbe4678,hbe4678,2007-05-20 08:00,2007-07-16 17:00,400
211,12456392,14517,6815838,13329,1,0,N,N,N,CP_Units,TT_Task,DT_FixedDUR2,RV_OK,TK_NotStart,CO05AC0150,05A Install Piling - 2101-F Ammonia Tank,,-407.983333333333,0,536,0,0,0,536,0,0,0,,,,2006-12-26 08:01,2007-03-21 08:01,,2007-03-03 08:00,2007-05-19 17:00,2007-03-03 08:00,2007-05-19 17:00,2007-03-03 08:00,2007-05-19 17:00,,2006-12-26 08:01,2007-03-21 08:01,,PT_Normal,,,,,dU7WN2bFScqliChZWt+sRg,t038XANoRQq3czNWVjL4QA,,,Y,0,0,,,2007-02-01 02:41,2007-02-04 01:05,hbe4678,hbe4678,2007-03-03 08:00,2007-05-19 17:00,536
212,12456393,14517,6815838,13329,1,0,N,N,N,CP_Units,TT_Task,DT_FixedDUR2,RV_OK,TK_NotStart,CO05AC0155,05A Install Piling - 2102-F Ammonia Tank,,-319.983333333333,0,536,0,0,0,536,0,0,0,,,,2007-01-15 08:01,2007-04-03 08:01,,2007-03-03 08:00,2007-05-19 17:00,2007-03-03 08:00,2007-05-19 17:00,2007-03-03 08:00,2007-05-19 17:00,,2007-01-15 08:01,2007-04-03 08:01,,PT_Normal,,,,,dbLwPz0cROGFUAVuihIBIw,Q9XGy62TRvynScJCzKJHAA,,,N,0,0,,,2007-02-01 02:41,2007-02-04 01:00,hbe4678,hbe4678,2007-03-03 08:00,2007-05-19 17:00,536
213,12456394,14517,6815843,13329,1,0,N,N,N,CP_Units,TT_Task,DT_FixedDUR2,RV_OK,TK_NotStart,CO05AE0110,"05A Lighting JB's, Stands, Tray & Cable",,-175.983333333333,0,192,0,0,0,192,0,0,0,,,,2008-03-08 08:01,2008-04-05 08:01,,2008-04-02 08:00,2008-04-29 17:00,2008-04-02 08:00,2008-04-29 17:00,2008-04-02 08:00,2008-04-29 17:00,,2008-03-08 08:01,2008-04-05 08:01,,PT_Normal,,,,,366UPZ8pTuK3vvxYeNDnEw,gI194rBVXESqJDk9RoPadB,,,N,0,0,,,2007-02-01 02:41,2007-02-04 01:00,hbe4678,hbe4678,2008-04-02 08:00,2008-04-29 17:00,192
214,12456395,14517,6815843,13329,1,0,N,N,N,CP_Units,TT_Task,DT_FixedDUR2,RV_OK,TK_NotStart,CO05AE0120,05A Lighting Fixture Installation/Termination,,-175.983333333333,200,96,0,0,0,96,0,0,0,,,,2008-03-29 08:01,2008-04-12 08:01,,2008-04-23 08:00,2008-05-06 17:00,2008-04-23 08:00,2008-05-06 17:00,2008-04-23 08:00,2008-05-06 17:00,,2008-03-29 08:01,2008-04-12 08:01,,PT_Normal,,,,,GtsLufLNSwqguvIXA4yYAQ,aYjTGZbd40CFm+fAaXJ7hx,,,N,0,0,,,2007-02-01 02:41,2007-02-04 01:00,hbe4678,hbe4678,2008-04-23 08:00,2008-05-06 17:00,96
215,12456396,14517,6815843,13329,1,0,N,N,N,CP_Units,TT_Task,DT_FixedDUR2,RV_OK,TK_NotStart,CO05AE0130,"05A Power/Control JB's, Tray, Cable, Termination",,-199.983333333333,0,768,0,0,0,768,0,0,0,,,,2007-11-19 08:01,2008-03-16 08:01,,2007-12-18 08:00,2008-04-13 17:00,2007-12-18 08:00,2008-04-13 17:00,2007-12-18 08:00,2008-04-13 17:00,,2007-11-19 08:01,2008-03-16 08:01,,PT_Normal,,,,,oYNDIK44QZOA4q6ByoYi1A,qRIjk3mpW0O3cf+PB1P4BR,,,N,0,0,,,2007-02-01 02:41,2007-02-04 01:00,hbe4678,hbe4678,2007-12-18 08:00,2008-04-13 17:00,768
216,12456397,14517,6815843,13329,1,0,N,N,N,CP_Units,TT_WBS,DT_FixedDUR2,RV_OK,TK_NotStart,WO050E0100,050 Above Ground Electrical,1343,64.0166666666667,2352,1135.98333333333,0,45821.37,45821.37,1135.98333333333,0,0,0,,,,2007-11-19 08:01,2008-05-17 08:01,,2007-11-18 08:01,2008-05-06 17:00,2007-11-18 08:01,2008-05-06 17:00,2007-11-18 08:01,2008-05-06 17:00,,2007-11-19 08:01,2008-05-17 08:01,,PT_Normal,,,,,OhWg4mXET0iZkOiP9zKz0g,oSpgdLx/c0mbotBzUhUZFR,,,N,0,0,,,2007-02-01 02:41,2007-02-04 01:05,hbe4678,hbe4678,2007-11-18 08:01,2008-05-06 17:00,1135.98333333333
217,12456398,14517,6815843,13329,1,0,N,N,N,CP_Units,TT_Task,DT_FixedDUR2,RV_OK,TK_NotStart,CO05BE0130,"05B Power/Control JB's, Tray, Cable, Termination",,1120,0,80,0,0,0,80,0,0,0,,,,2008-05-05 08:01,2008-05-17 08:01,,2007-11-18 08:01,2007-11-29 08:01,2007-11-18 08:01,2007-11-29 08:01,2007-11-18 08:01,2007-11-29 08:01,,2008-05-05 08:01,2008-05-17 08:01,,PT_Normal,,,,,NqNDS3UKTOqGzLgx110ngQ,6i6CqvuqwESy0K5uGNBbiB,,,N,0,0,,,2007-02-01 02:41,2007-02-01 02:43,hbe4678,hbe4678,2007-11-18 08:01,2007-11-29 08:01,80
218,12456399,14517,6815844,13329,1,0,N,N,N,CP_Units,TT_Task,DT_FixedDUR2,RV_OK,TK_NotStart,CO05AI0120,"05A Instrument JB's, Field Instr, Tray, Cable",,-199.983333333333,0,768,0,0,0,768,0,0,0,,,,2007-11-19 08:01,2008-03-16 08:01,,2007-12-18 08:00,2008-04-13 17:00,2007-12-18 08:00,2008-04-13 17:00,2007-12-18 08:00,2008-04-13 17:00,,2007-11-19 08:01,2008-03-16 08:01,,PT_Normal,,,,,6+mp4PzjSteUZyWPjO1Gzg,PTk8FwVnwEmv67sdnZUiiB,,,N,0,0,,,2007-02-01 02:41,2007-02-04 01:00,hbe4678,hbe4678,2007-12-18 08:00,2008-04-13 17:00,768
219,12456400,14517,6815844,13329,1,0,N,N,N,CP_Units,TT_Task,DT_FixedDUR2,RV_OK,TK_NotStart,CO05AI0130,05A Install In Line Instruments,,-231.983333333333,0,80,0,0,0,80,0,0,0,,,,2008-03-11 08:01,2008-03-23 08:01,,2008-04-14 08:00,2008-04-24 17:00,2008-04-14 08:00,2008-04-24 17:00,2008-04-14 08:00,2008-04-24 17:00,,2008-03-11 08:01,2008-03-23 08:01,,PT_Normal,,,,,4vgu+pVdSESYmgEn7JFq+Q,uetX9BhJoUyFVH1l54NyFR,,,N,0,0,,,2007-02-01 02:41,2007-02-04 01:00,hbe4678,hbe4678,2008-04-14 08:00,2008-04-24 17:00,80
220,12456401,14517,6815844,13329,1,0,N,N,N,CP_Units,TT_Task,DT_FixedDUR2,RV_OK,TK_NotStart,CO05AI0140,05A Continuity Testing,,-199.983333333333,32,80,0,0,0,80,0,0,0,,,,2008-03-11 08:01,2008-03-23 08:01,,2008-04-09 08:00,2008-04-20 17:00,2008-04-09 08:00,2008-04-20 17:00,2008-04-09 08:00,2008-04-20 17:00,,2008-03-11 08:01,2008-03-23 08:01,,PT_Normal,,,,,sLC9JwqSSYqpOc2yZKFWiA,rdVnVD9ua0K9E6TDJa0uGx,,,N,0,0,,,2007-02-01 02:41,2007-02-04 01:00,hbe4678,hbe4678,2008-04-09 08:00,2008-04-20 17:00,80
221,12456402,14517,6815945,13332,1,0,N,N,N,CP_Units,TT_Task,DT_FixedDUR2,RV_OK,TK_NotStart,SC05AI0150,05A Function Testing,,-271.983333333333,200,256,0,0,0,256,0,0,0,,,,2008-03-11 08:01,2008-04-12 08:01,,2008-04-14 08:00,2008-05-15 17:00,2008-04-14 08:00,2008-05-15 17:00,2008-04-14 08:00,2008-05-15 17:00,,2008-03-11 08:01,2008-04-12 08:01,,PT_Normal,,,,,8EhAtOxvR0qb6Jbsg5jUVw,Ehesr2+/lUqWQxwyoXVDVR,,,N,0,0,,,2007-02-01 02:41,2007-02-04 01:00,hbe4678,hbe4678,2008-04-14 08:00,2008-05-15 17:00,256
222,12456403,14517,6815844,13329,1,0,N,N,N,CP_Units,TT_WBS,DT_FixedDUR2,RV_OK,TK_NotStart,WO050I0100,050 Install Instruments & Test,1341,192.016666666667,2432,1055.98333333333,0,4678.41,4678.41,1055.98333333333,0,0,0,,,,2007-11-19 08:01,2008-05-24 08:01,,2007-11-18 08:01,2008-04-24 17:00,2007-11-18 08:01,2008-04-24 17:00,2007-11-18 08:01,2008-04-24 17:00,,2007-11-19 08:01,2008-05-24 08:01,,PT_Normal,,,,,LGcPtgidQbKdpkFku/s3WQ,s0RSJ3XznECsyJcj6hYvQh,,,N,0,0,,,2007-02-01 02:41,2007-02-04 01:05,hbe4678,hbe4678,2007-11-18 08:01,2008-04-24 17:00,1055.98333333333
223,12456404,14517,6815844,13329,1,0,N,N,N,CP_Units,TT_Task,DT_FixedDUR2,RV_OK,TK_NotStart,CO05BI0120,"05B Instrument JB's, Field Instr, Tray, Cable",,1120,175.983333333333,80,0,0,0,80,0,0,0,,,,2008-05-05 08:01,2008-05-17 08:01,,2007-11-18 08:01,2007-11-29 08:01,2007-11-18 08:01,2007-11-29 08:01,2007-11-18 08:01,2007-11-29 08:01,,2008-05-05 08:01,2008-05-17 08:01,,PT_Normal,,,,,vTcoRQpDSSCN82HnjNV7Ow,/AibviVKZEGJQYuCqJq5Ox,,,N,0,0,,,2007-02-01 02:41,2007-02-04 01:00,hbe4678,hbe4678,2007-11-18 08:01,2007-11-29 08:01,80
224,12456405,14517,6815844,13329,1,0,N,N,N,CP_Units,TT_Task,DT_FixedDUR2,RV_OK,TK_NotStart,CO05BI0130,05B Install In Line Instruments,,544,0,8,0,0,0,8,0,0,0,,,,2008-05-12 08:01,2008-05-13 08:01,,2008-02-23 08:01,2008-02-24 08:01,2008-02-23 08:01,2008-02-24 08:01,2008-02-23 08:01,2008-02-24 08:01,,2008-05-12 08:01,2008-05-13 08:01,,PT_Normal,,,,,D2ZLdJUSQj2PqN660Zemcg,opHepJ2lL0G4Rwmf70iZmR,,,N,0,0,,,2007-02-01 02:41,2007-02-01 02:43,hbe4678,hbe4678,2008-02-23 08:01,2008-02-24 08:01,8
225,12456406,14517,6815844,13329,1,0,N,N,N,CP_Units,TT_Task,DT_FixedDUR2,RV_OK,TK_NotStart,CO05BI0140,05B Continuity Testing,,944.016666666667,320.016666666667,8,0,0,0,8,0,0,0,,,,2008-05-22 08:01,2008-05-24 08:01,,2008-01-06 08:00,2008-01-06 17:00,2008-01-06 08:00,2008-01-06 17:00,2008-01-06 08:00,2008-01-06 17:00,,2008-05-22 08:01,2008-05-24 08:01,,PT_Normal,,,,,E73ZdFglQnursBq3z/2A/A,hqA2XGZ6rESzWttQtj7NKR,,,N,0,0,,,2007-02-01 02:41,2007-02-04 01:00,hbe4678,hbe4678,2008-01-06 08:00,2008-01-06 17:00,8
226,12456407,14517,6815945,13332,1,0,N,N,N,CP_Units,TT_Task,DT_FixedDUR2,RV_OK,TK_NotStart,SC05BI0150,05B Function Testing,,632,56,24,0,0,0,24,0,0,0,,,,2008-05-24 08:01,2008-05-27 08:01,,2008-03-06 08:01,2008-03-09 08:01,2008-03-06 08:01,2008-03-09 08:01,2008-03-06 08:01,2008-03-09 08:01,,2008-05-24 08:01,2008-05-27 08:01,,PT_Normal,,,,,VVpnqVvbRciuebIcZBHlSQ,Wa/N3NStnEWxD60TjHhCHh,,,N,0,0,,,2007-02-01 02:41,2007-02-03 00:41,hbe4678,hbe4678,2008-03-06 08:01,2008-03-09 08:01,24
227,12456408,14517,6815845,13329,1,0,N,N,N,CP_Units,TT_Task,DT_FixedDUR2,RV_OK,TK_NotStart,CO05AK0120,05A Construct Dike (Retaining Wall),1351,-375.983333333333,0,480,0,11627,0,480,0,0,0,,,,2008-02-02 08:01,2008-04-12 08:01,,2008-03-27 08:00,2008-06-04 17:00,2008-03-27 08:00,2008-06-04 17:00,2008-03-27 08:00,2008-06-04 17:00,,2008-02-02 08:01,2008-04-12 08:01,,PT_Normal,,,,,EAmp4UdKRoqW0RxVnSIaiQ,QUD//bVDzEavAhNctE+C7B,,,N,0,0,,,2007-02-01 02:41,2007-02-04 01:00,hbe4678,hbe4678,2008-03-27 08:00,2008-06-04 17:00,480
228,12456409,14517,6815845,13329,1,0,N,N,N,CP_Units,TT_Task,DT_FixedDUR2,RV_OK,TK_NotStart,CO05AK0130,"05A Guard Posts, Fence, Gravel...",1351,-375.983333333333,0,480,0,14803,0,480,0,0,0,,,,2008-02-02 08:01,2008-04-12 08:01,,2008-03-27 08:00,2008-06-04 17:00,2008-03-27 08:00,2008-06-04 17:00,2008-03-27 08:00,2008-06-04 17:00,,2008-02-02 08:01,2008-04-12 08:01,,PT_Normal,,,,,6/KOwyqWQQSBFQn/KfuE5A,PKBRoYew7kaKMcWGDvq/cR,,,N,0,0,,,2007-02-01 02:41,2007-02-04 01:00,hbe4678,hbe4678,2008-03-27 08:00,2008-06-04 17:00,480
229,12456410,14517,6815845,13329,1,0,N,N,N,CP_Units,TT_WBS,DT_FixedDUR2,RV_OK,TK_NotStart,WO050K0100,050 Site Prep,1351,-375.983333333333,2152,480,0,30417,30417,480,0,0,0,,,,2008-02-02 08:01,2008-04-12 08:01,,2008-03-27 08:00,2008-06-04 17:00,2008-03-27 08:00,2008-06-04 17:00,2008-03-27 08:00,2008-06-04 17:00,,2008-02-02 08:01,2008-04-12 08:01,,PT_Normal,,,,,pEKvg0wVS5SURp69AqzVBg,U1NGR28WDk2GO2LJYX0ulB,,,N,0,0,,,2007-02-01 02:41,2007-02-04 01:05,hbe4678,hbe4678,2008-03-27 08:00,2008-06-04 17:00,480
230,12456411,14517,6815846,13329,1,0,N,N,N,CP_Units,TT_Task,DT_FixedDUR2,RV_OK,TK_NotStart,CO05AM0110,05A Set 2202-B Flare & KO Drum,,168.016666666667,400,224,0,0,0,224,0,0,0,,,,2007-12-27 08:01,2008-01-29 08:01,,2007-11-27 08:00,2008-01-03 17:00,2007-11-27 08:00,2008-01-03 17:00,2007-11-27 08:00,2008-01-03 17:00,,2007-12-27 08:01,2008-01-29 08:01,,PT_Normal,,,,,YFE0f6kKQ8WY0T8VpTPhUg,urj9acyaU0yVvE1vcQFnmx,,,N,0,0,,,2007-02-01 02:41,2007-02-04 01:00,hbe4678,hbe4678,2007-11-27 08:00,2008-01-03 17:00,224
231,12456412,14517,6815846,13329,1,0,N,N,N,CP_Units,TT_WBS,DT_FixedDUR2,RV_OK,TK_NotStart,WO050M0100,050 Major Equipment,1347,488.016666666667,3200,671.983333333333,0,13334.82,13334.82,1328,0,0,0,,,,2007-12-04 08:01,2008-03-16 08:01,,2007-09-01 08:01,2008-01-03 17:00,2007-09-01 08:01,2008-01-03 17:00,2007-09-01 08:01,2008-04-09 08:01,,2007-12-04 08:01,2008-03-16 08:01,,PT_Normal,,,,,S24IwBWERhmyPjdfyukF9g,t8/iWHMz60WZWuBvsXLVYx,,,N,0,0,,,2007-02-01 02:41,2007-02-04 01:05,hbe4678,hbe4678,2007-09-01 08:01,2008-01-03 17:00,671.983333333333
232,12456413,14517,6815846,13329,1,0,N,N,N,CP_Units,TT_Task,DT_FixedDUR2,RV_OK,TK_NotStart,CO05AM0130,05A Set 2101-L Ammonia Refrigeration Package,,368.016666666667,600,24,0,0,0,24,0,0,0,,,,2008-01-26 08:01,2008-01-29 08:01,,2007-11-27 08:00,2007-11-29 17:00,2007-11-27 08:00,2007-11-29 17:00,2007-11-27 08:00,2007-11-29 17:00,,2008-01-26 08:01,2008-01-29 08:01,,PT_Normal,,,,,9M7rMq0qRwev9pi2+qINGw,zoy8GwkJ6UCHkrYi5IkQNR,,,N,0,0,,,2007-02-01 02:41,2007-02-04 01:00,hbe4678,hbe4678,2007-11-27 08:00,2007-11-29 17:00,24
233,12456414,14517,6815846,13329,1,0,N,N,N,CP_Units,TT_Task,DT_FixedDUR2,RV_OK,TK_NotStart,CO05BM0110,05B Install Loading Arm,,496,0,664,0,0,0,1328,0,0,0,,,,2007-12-04 08:01,2008-03-16 08:01,,2007-09-01 08:01,2008-01-03 08:01,2007-09-01 08:01,2008-01-03 08:01,2007-09-01 08:01,2008-04-09 08:01,,2007-12-04 08:01,2008-03-16 08:01,,PT_Normal,,,,,tB+m7V2/Rv67/2qKUzWmtg,5cQUf0NMuE6o4pt6sA2Pah,,,N,0,0,,,2007-02-01 02:41,2007-02-04 01:00,hbe4678,hbe4678,2007-09-01 08:01,2008-01-03 08:01,664
234,12456415,14517,6815846,13329,1,0,N,N,N,CP_Units,TT_Task,DT_FixedDUR2,RV_OK,TK_NotStart,CO05AM0150,05A Set Rotating Equipment,,248.016666666667,480,144,0,0,0,144,0,0,0,,,,2008-01-08 08:01,2008-01-29 08:01,,2007-11-27 08:00,2007-12-17 17:00,2007-11-27 08:00,2007-12-17 17:00,2007-11-27 08:00,2007-12-17 17:00,,2008-01-08 08:01,2008-01-29 08:01,,PT_Normal,,,,,11liJmsgRIW43zSTtajkOA,5cQUf0NMuE6o4pt6sA2Pah,,,N,0,0,,,2007-02-01 02:41,2007-02-04 01:00,hbe4678,hbe4678,2007-11-27 08:00,2007-12-17 17:00,144
235,12456416,14517,6815847,13329,1,0,N,N,N,CP_Units,TT_Task,DT_FixedDUR2,RV_OK,TK_NotStart,CO05AP0130,05A LB Pipe Erection,,-231.983333333333,0,768,0,0,0,768,0,0,0,,,,2007-10-31 08:01,2008-02-26 08:01,,2007-12-04 08:00,2008-03-30 17:00,2007-12-04 08:00,2008-03-30 17:00,2007-12-04 08:00,2008-03-30 17:00,,2007-10-31 08:01,2008-02-26 08:01,,PT_Normal,,,,,sKH7xpCDQz2hbMqdNVChsw,y6id+95X+UWjPbn+Sj7kaB,,,N,0,0,,,2007-02-01 02:41,2007-02-04 01:00,hbe4678,hbe4678,2007-12-04 08:00,2008-03-30 17:00,768
236,12456417,14517,6815847,13329,1,0,N,N,N,CP_Units,TT_Task,DT_FixedDUR2,RV_OK,TK_NotStart,CO05AP0140,05A SB Pipe Erection,,-231.983333333333,0,768,0,0,0,768,0,0,0,,,,2007-11-07 08:01,2008-03-04 08:01,,2007-12-11 08:00,2008-04-06 17:00,2007-12-11 08:00,2008-04-06 17:00,2007-12-11 08:00,2008-04-06 17:00,,2007-11-07 08:01,2008-03-04 08:01,,PT_Normal,,,,,E6l8a7kTQlCZJvhmbX7d1Q,hzxg3iYXuUCIQnsHvkO+Hh,,,N,0,0,,,2007-02-01 02:41,2007-02-04 01:00,hbe4678,hbe4678,2007-12-11 08:00,2008-04-06 17:00,768
237,12456418,14517,6815847,13329,1,0,N,N,N,CP_Units,TT_Task,DT_FixedDUR2,RV_OK,TK_NotStart,CO05AP0150,05A Punchlist / Test Piping,,-231.983333333333,0,384,0,0,0,384,0,0,0,,,,2008-01-15 08:01,2008-03-11 08:01,,2008-02-18 08:00,2008-04-13 17:00,2008-02-18 08:00,2008-04-13 17:00,2008-02-18 08:00,2008-04-13 17:00,,2008-01-15 08:01,2008-03-11 08:01,,PT_Normal,,,,,g21yqEeGSu+M4up9I9t4dQ,w2BPIPMEiEWw8Gqhfa2ejR,,,N,0,0,,,2007-02-01 02:41,2007-02-04 01:00,hbe4678,hbe4678,2008-02-18 08:00,2008-04-13 17:00,384
238,12456419,14517,6815847,13329,1,0,N,N,N,CP_Units,TT_WBS,DT_FixedDUR2,RV_OK,TK_NotStart,WO050P0100,050 Above Ground Pipe,1342,152.016666666667,2512,1368,0,146671.63,146671.63,1368,0,0,0,,,,2007-10-31 08:01,2008-05-06 08:01,,2007-08-30 08:00,2008-04-13 17:00,2007-08-30 08:00,2008-04-13 17:00,2007-08-30 08:00,2008-04-13 17:00,,2007-10-31 08:01,2008-05-06 08:01,,PT_Normal,,,,,bVzUF5kWQAq/SZRsI+qpvQ,GyICP3D7WUSG1sKaXFpOZB,,,N,0,0,,,2007-02-01 02:41,2007-02-04 01:05,hbe4678,hbe4678,2007-08-30 08:00,2008-04-13 17:00,1368
239,12456420,14517,6815847,13329,1,0,N,N,N,CP_Units,TT_Task,DT_FixedDUR2,RV_OK,TK_NotStart,CO05BP0130,05B LB Pipe Erection - To Loading Arm,,1216.01666666667,0,208,0,0,0,208,0,0,0,,,,2008-03-23 08:01,2008-04-22 08:01,,2007-08-30 08:00,2007-10-21 17:00,2007-08-30 08:00,2007-10-21 17:00,2007-08-30 08:00,2007-10-21 17:00,,2008-03-23 08:01,2008-04-22 08:01,,PT_Normal,,,,,XGmzcBlKSYe7YstDImA7yw,DOdbhyYdXkuXLWZ6/TMUux,,,N,0,0,,,2007-02-01 02:41,2007-02-04 01:00,hbe4678,hbe4678,2007-08-30 08:00,2007-10-21 17:00,208
240,12456421,14517,6815847,13329,1,0,N,N,N,CP_Units,TT_Task,DT_FixedDUR2,RV_OK,TK_NotStart,CO05BP0140,05B SB Pipe Erection - To Loading Arm,,1216.01666666667,0,208,0,0,0,208,0,0,0,,,,2008-03-30 08:01,2008-04-29 08:01,,2007-09-06 08:00,2007-10-28 17:00,2007-09-06 08:00,2007-10-28 17:00,2007-09-06 08:00,2007-10-28 17:00,,2008-03-30 08:01,2008-04-29 08:01,,PT_Normal,,,,,aaT8guYkS0iuAeqXxu528g,cTSt+hOqg0uvkwIi1c6q4h,,,N,0,0,,,2007-02-01 02:41,2007-02-04 01:00,hbe4678,hbe4678,2007-09-06 08:00,2007-10-28 17:00,208
241,12456422,14517,6815847,13329,1,0,N,N,N,CP_Units,TT_Task,DT_FixedDUR2,RV_OK,TK_NotStart,CO05BP0150,05B Punchlist / Test Piping,,504,0,104,0,0,0,104,0,0,0,,,,2008-04-21 08:01,2008-05-06 08:01,,2008-02-07 08:01,2008-02-23 08:01,2008-02-07 08:01,2008-02-23 08:01,2008-02-07 08:01,2008-02-23 08:01,,2008-04-21 08:01,2008-05-06 08:01,,PT_Normal,,,,,oUdTC/NKQRKCeAP1yL8lqg,Wqh1XC69/0O2Tt4Ixtgegh,,,N,0,0,,,2007-02-01 02:41,2007-02-01 02:43,hbe4678,hbe4678,2008-02-07 08:01,2008-02-23 08:01,104
242,12456423,14517,6815849,13329,1,0,N,N,N,CP_Units,TT_WBS,DT_FixedDUR2,RV_OK,TK_NotStart,WO050C0110,050 Concrete Paving,1355,0,5360,0,0,0,0,0,0,0,0,,,,2007-01-27 08:00,2007-01-27 08:00,,2007-01-27 08:00,2007-01-27 08:00,2007-01-27 08:00,2007-01-27 08:00,2007-01-27 08:00,2007-07-14 17:00,,2007-01-27 08:00,2007-01-27 08:00,,PT_Normal,,,,,yxnznLuKTSKr+eZE4zgoew,JTt4O17YQ9mOC0kTJnZdCg,,,N,0,0,,,2007-02-01 02:41,2007-02-04 01:05,hbe4678,hbe4678,2007-01-27 08:00,2007-01-27 08:00,0
243,12456424,14517,6815852,13329,1,0,N,N,N,CP_Units,TT_WBS,DT_FixedDUR2,RV_OK,TK_NotStart,WO030K0100,030 Site Prep,1351,72.0166666666667,2600,800,0,3162.15,3162.15,800,0,0,0,,,,2007-12-11 08:01,2008-04-12 08:01,,2007-12-01 08:00,2008-03-31 17:00,2007-12-01 08:00,2008-03-31 17:00,2007-12-01 08:00,2008-03-31 17:00,,2007-12-11 08:01,2008-04-12 08:01,,PT_Normal,,,,,u2gMt/s5Q8mNBYqNUv6JAw,NJNGXo+/SEGWHoLPJ954pA,,,N,0,0,,,2007-02-01 02:41,2007-02-04 01:05,hbe4678,hbe4678,2007-12-01 08:00,2008-03-31 17:00,800
244,12456425,14517,6815852,13329,1,0,N,N,N,CP_Units,TT_Task,DT_FixedDUR2,RV_OK,TK_NotStart,CO030K0100,030 Site Prep - Guard Posts & Gravel,,72.0166666666667,480,800,0,0,0,800,0,0,0,,,,2007-12-11 08:01,2008-04-12 08:01,,2007-12-01 08:00,2008-03-31 17:00,2007-12-01 08:00,2008-03-31 17:00,2007-12-01 08:00,2008-03-31 17:00,,2007-12-11 08:01,2008-04-12 08:01,,PT_Normal,,,,,FbojzxT0Ra6jUiG6LBu8ZA,f9IhJmGR1k+Qu6tLsW4ZNh,,,N,0,0,,,2007-02-01 02:41,2007-02-04 01:00,hbe4678,hbe4678,2007-12-01 08:00,2008-03-31 17:00,800
245,12456426,14517,6815853,13329,1,0,N,N,N,CP_Units,TT_WBS,DT_FixedDUR2,RV_OK,TK_Active,WO030M0100,030 Major Equipment,1347,1536,4543.98333333333,816.016666666667,3435,13500.39,16935.39,1200,0,0,0,,2006-09-18 00:00,,2007-07-31 08:01,2008-02-02 08:01,,2007-01-27 08:00,2007-05-26 08:01,2007-01-27 08:00,2007-05-26 08:01,2007-03-03 08:00,2007-08-23 17:00,,2007-07-31 08:01,2008-02-02 08:01,,PT_Normal,,,,,IYwKCWwbRwmPiL0KMJD58A,3kY7wCC5nEuieePIe6staB,,,N,0,0,,,2007-02-01 02:41,2007-02-04 01:05,hbe4678,hbe4678,2007-01-27 08:00,2007-05-26 08:01,816.016666666667
246,12456427,14517,6815853,13329,1,0,N,N,N,CP_Units,TT_Task,DT_FixedDUR2,RV_OK,TK_NotStart,CO03BM0110,03B Set Static Equipment - Gen'l,,1696,111.983333333333,224,0,0,0,224,0,0,0,,,,2007-12-31 08:01,2008-02-02 08:01,,2007-03-31 08:01,2007-05-02 08:01,2007-03-31 08:01,2007-05-02 08:01,2007-03-31 08:01,2007-05-02 08:01,,2007-12-31 08:01,2008-02-02 08:01,,PT_Normal,,,,,GkLqxcM5RKyylaOZn5DyaA,MLIt4cC26EGeb6vOoPB/cB,,,N,0,0,,,2007-02-01 02:41,2007-02-04 01:00,hbe4678,hbe4678,2007-03-31 08:01,2007-05-02 08:01,224
247,12456428,14517,6815853,13329,1,0,N,N,N,CP_Units,TT_Task,DT_FixedDUR2,RV_OK,TK_NotStart,CO03BM0150,03B Set Rotating Equipment,,1600.01666666667,0,144,0,0,0,144,0,0,0,,,,2008-01-12 08:01,2008-02-02 08:01,,2007-04-25 08:00,2007-05-15 17:00,2007-04-25 08:00,2007-05-15 17:00,2007-04-25 08:00,2007-05-15 17:00,,2008-01-12 08:01,2008-02-02 08:01,,PT_Normal,,,,,kak2/43jTbKwcKH/CtwHNQ,DXWW6CwF6EevjB7+n01e6R,,,N,0,0,,,2007-02-01 02:41,2007-02-04 01:00,hbe4678,hbe4678,2007-04-25 08:00,2007-05-15 17:00,144
248,12456429,14517,6815853,13329,1,100,N,N,N,CP_Units,TT_Task,DT_FixedDUR2,RV_OK,TK_Complete,CO03CM0110,"03C Set Static Equipment - 2203/4-F Caustic, Sulfuric Acid Tanks",,,,0,0,0,0,48,0,0,0,,2006-09-18 00:00,2006-09-18 00:00,2007-10-30 08:00,2007-10-30 08:00,,2007-01-27 00:00,2007-01-27 00:00,,,2007-03-03 08:00,2007-03-08 17:00,,,,,PT_Normal,,,,,R4Cp3cX/QgWSNYJcGCGhEQ,PHuFun6QfkiEQJynEhyMix,,,N,0,0,,,2007-02-01 02:41,2007-02-04 01:05,hbe4678,hbe4678,,,0
249,12456430,14517,6815853,13329,1,0,N,N,N,CP_Units,TT_Task,DT_FixedDUR2,RV_OK,TK_NotStart,CO03CM0150,03C Set Rotating Equipment,,1167.98333333333,0,48,0,0,0,48,0,0,0,,,,2007-10-23 08:00,2007-10-29 17:00,,2007-04-14 08:01,2007-04-21 08:01,2007-04-14 08:01,2007-04-21 08:01,2007-04-14 08:01,2007-04-21 08:01,,2007-10-23 08:00,2007-10-29 17:00,,PT_Normal,,,,,tuA+K6uFQyezYi3Y7qxXAw,YUn/PE1SOUGbo3f/e/MAkh,,,N,0,0,,,2007-02-01 02:41,2007-02-04 01:00,hbe4678,hbe4678,2007-04-14 08:01,2007-04-21 08:01,48
250,12456431,14517,6815853,13329,1,0,N,N,N,CP_Units,TT_Task,DT_FixedDUR2,RV_OK,TK_NotStart,CO03DM0150,03D Set Rotating Equipment,,1264,0,96,0,0,0,96,0,0,0,,,,2007-11-06 08:01,2007-11-20 08:01,,2007-04-14 08:01,2007-04-28 08:01,2007-04-14 08:01,2007-04-28 08:01,2007-04-14 08:01,2007-04-28 08:01,,2007-11-06 08:01,2007-11-20 08:01,,PT_Normal,,,,,uDynG8HlROCKYvuvXBUDUA,WsdEKhZ87kmxQYCZPnzF/h,,,N,0,0,,,2007-02-01 02:41,2007-02-04 01:00,hbe4678,hbe4678,2007-04-14 08:01,2007-04-28 08:01,96
251,12456432,14517,6815853,13329,1,0,N,N,N,CP_Units,TT_Task,DT_FixedDUR2,RV_OK,TK_NotStart,CO03EM0110,03E Set Static Equipment - Gen'l,,1080,287.983333333333,240,0,0,0,240,0,0,0,,,,2007-09-04 08:01,2007-10-31 08:01,,2007-03-31 08:01,2007-05-05 08:01,2007-03-31 08:01,2007-05-05 08:01,2007-03-31 08:01,2007-05-05 08:01,,2007-09-04 08:01,2007-10-31 08:01,,PT_Normal,,,,,NEFvUCgQSq6dtp3XFj5rLQ,VDKy7fv/3U2CqzYzIwuU8B,,,N,0,0,,,2007-02-01 02:41,2007-02-04 01:00,hbe4678,hbe4678,2007-03-31 08:01,2007-05-05 08:01,240
252,12456433,14517,6815853,13329,1,0,N,N,N,CP_Units,TT_Task,DT_FixedDUR2,RV_OK,TK_Active,CO03FM0110,03F Erect 2002-U Package Boiler,,1272.01666666667,0,528,0,0,0,768,0,0,0,,2006-12-17 00:00,,2007-07-31 08:01,2007-11-07 08:01,2007-04-12 17:00,2007-01-27 08:00,2007-04-12 17:00,2007-01-27 08:00,2007-04-12 17:00,2007-05-05 08:00,2007-08-23 17:00,,2007-07-31 08:01,2007-11-07 08:01,,PT_Normal,,,,,4RMhy02DS6+SI7qV/YnJMg,1YTgs3Y+LkmoAx0iZcZtFB,,,N,0,0,,,2007-02-01 02:41,2007-02-04 01:00,hbe4678,hbe4678,2007-01-27 08:00,2007-04-12 17:00,528
253,12456434,14517,6815853,13329,1,0,N,N,N,CP_Units,TT_Task,DT_FixedDUR2,RV_OK,TK_NotStart,CO03FM0150,03F Install Chemical Injection System,,1272.01666666667,0,288,0,0,0,288,0,0,0,,,,2007-09-04 08:01,2007-11-07 08:01,,2007-03-03 08:00,2007-04-12 17:00,2007-03-03 08:00,2007-04-12 17:00,2007-03-03 08:00,2007-04-12 17:00,,2007-09-04 08:01,2007-11-07 08:01,,PT_Normal,,,,,jSXIb8dCSNWEOe5IFKonDg,HOxhcsyrsE6MCBO2xWl4oB,,,N,0,0,,,2007-02-01 02:41,2007-02-04 01:00,hbe4678,hbe4678,2007-03-03 08:00,2007-04-12 17:00,288
254,12456435,14517,6815853,13329,1,0,N,N,N,CP_Units,TT_Task,DT_FixedDUR2,RV_OK,TK_NotStart,CO03AM0110,03A Set Static Equipment,,759.983333333333,311.983333333333,192,0,0,0,192,0,0,0,,,,2007-08-16 08:00,2007-09-12 17:00,,2007-04-28 08:01,2007-05-26 08:01,2007-04-28 08:01,2007-05-26 08:01,2007-04-28 08:01,2007-05-26 08:01,,2007-08-16 08:00,2007-09-12 17:00,,PT_Normal,,,,,EzFAVaLkTw+BwiE9hk4mIA,MLIt4cC26EGeb6vOoPB/cB,,,N,0,0,,,2007-02-01 02:41,2007-02-04 01:00,hbe4678,hbe4678,2007-04-28 08:01,2007-05-26 08:01,192
255,12456436,14517,6815854,13329,1,0,N,N,N,CP_Units,TT_Task,DT_FixedDUR2,RV_OK,TK_NotStart,CO03DP0130,03D LB Pipe Erection,,784.016666666667,8.01666666666667,136,0,0,0,136,0,0,0,,,,2007-11-20 08:01,2007-12-10 08:01,,2007-07-07 08:00,2007-07-25 17:00,2007-07-07 08:00,2007-07-25 17:00,2007-07-07 08:00,2007-07-25 17:00,,2007-11-20 08:01,2007-12-10 08:01,,PT_Normal,,,,,WSjYIKrATXOs0q887cQJGg,ZQPJ9PJGTUqz26knfdmjmx,,,N,0,0,,,2007-02-01 02:41,2007-02-04 01:00,hbe4678,hbe4678,2007-07-07 08:00,2007-07-25 17:00,136
256,12456437,14517,6815854,13329,1,0,N,N,N,CP_Units,TT_Task,DT_FixedDUR2,RV_OK,TK_NotStart,CO03DP0140,03D SB Pipe Erection,,776,0,136,0,0,0,136,0,0,0,,,,2007-11-27 08:01,2007-12-17 08:01,,2007-07-15 08:01,2007-08-04 08:01,2007-07-15 08:01,2007-08-04 08:01,2007-07-15 08:01,2007-08-04 08:01,,2007-11-27 08:01,2007-12-17 08:01,,PT_Normal,,,,,mdcygA4OSjer3n/M1ZvEtA,r7jWJXZNb0e/wjI/vhiHkB,,,N,0,0,,,2007-02-01 02:41,2007-02-01 02:43,hbe4678,hbe4678,2007-07-15 08:01,2007-08-04 08:01,136
257,12456438,14517,6815854,13329,1,0,N,N,N,CP_Units,TT_Task,DT_FixedDUR2,RV_OK,TK_NotStart,CO03DP0150,03D Punchlist / Test Piping,,776,0,64,0,0,0,64,0,0,0,,,,2007-12-15 08:01,2007-12-30 08:01,,2007-08-01 08:01,2007-08-11 08:01,2007-08-01 08:01,2007-08-11 08:01,2007-08-01 08:01,2007-08-11 08:01,,2007-12-15 08:01,2007-12-30 08:01,,PT_Normal,,,,,i6bQkvxJRE6T0jYMUO/QRw,jb0l2fFOMkSqh83h/VELFx,,,N,0,0,,,2007-02-01 02:41,2007-02-01 02:43,hbe4678,hbe4678,2007-08-01 08:01,2007-08-11 08:01,64
258,12456439,14517,6815854,13329,1,0,N,N,N,CP_Units,TT_Task,DT_FixedDUR2,RV_OK,TK_NotStart,CO03EP0130,03E LB Pipe Erection,,464.016666666667,0,432,0,0,0,432,0,0,0,,,,2007-09-04 08:01,2007-11-28 08:01,,2007-06-28 08:00,2007-08-29 17:00,2007-06-28 08:00,2007-08-29 17:00,2007-06-28 08:00,2007-08-29 17:00,,2007-09-04 08:01,2007-11-28 08:01,,PT_Normal,,,,,EhwvfexUTzC+Dl5Y6gpKHQ,sUoCgNXJYUCGsfWASc1Ewx,,,N,0,0,,,2007-02-01 02:41,2007-02-04 01:00,hbe4678,hbe4678,2007-06-28 08:00,2007-08-29 17:00,432
259,12456440,14517,6815854,13329,1,0,N,N,N,CP_Units,TT_Task,DT_FixedDUR2,RV_OK,TK_NotStart,CO03EP0140,03E SB Pipe Erection,,464.016666666667,0,432,0,0,0,432,0,0,0,,,,2007-09-11 08:01,2007-12-05 08:01,,2007-07-05 08:00,2007-09-05 17:00,2007-07-05 08:00,2007-09-05 17:00,2007-07-05 08:00,2007-09-05 17:00,,2007-09-11 08:01,2007-12-05 08:01,,PT_Normal,,,,,IgCXMF2ITpWVUsTXK3uWwQ,TT+9x3iV8EqGaAFZdIa3Oh,,,N,0,0,,,2007-02-01 02:41,2007-02-04 01:00,hbe4678,hbe4678,2007-07-05 08:00,2007-09-05 17:00,432
260,12456441,14517,6815854,13329,1,0,N,N,N,CP_Units,TT_Task,DT_FixedDUR2,RV_OK,TK_NotStart,CO03EP0150,03E Punchlist / Test Piping,,464.016666666667,0,216,0,0,0,216,0,0,0,,,,2007-11-11 08:01,2007-12-12 08:01,,2007-08-13 08:00,2007-09-12 17:00,2007-08-13 08:00,2007-09-12 17:00,2007-08-13 08:00,2007-09-12 17:00,,2007-11-11 08:01,2007-12-12 08:01,,PT_Normal,,,,,KainzUQvTFCM1Judh+NVNg,Zsd4EAK/pESAA2l3yeyfdh,,,N,0,0,,,2007-02-01 02:41,2007-02-04 01:00,hbe4678,hbe4678,2007-08-13 08:00,2007-09-12 17:00,216
261,12456442,14517,6815854,13329,1,0,N,N,N,CP_Units,TT_Task,DT_FixedDUR2,RV_OK,TK_NotStart,CO03YP0130,03Y LB Pipe Erection,,312,0,720,0,0,0,720,0,0,0,,,,2007-06-11 08:00,2007-10-03 17:00,,2007-04-26 08:00,2007-08-08 17:00,2007-04-26 08:00,2007-08-08 17:00,2007-04-26 08:00,2007-08-08 17:00,,2007-06-11 08:00,2007-10-03 17:00,,PT_Normal,,,,,+ea7ealIT86dylmb2ifRxg,Wj/o0osZqU+2ZIRhwm2DHx,,,N,0,0,,,2007-02-01 02:41,2007-02-01 02:43,hbe4678,hbe4678,2007-04-26 08:00,2007-08-08 17:00,720
262,12456443,14517,6815854,13329,1,0,N,N,N,CP_Units,TT_Task,DT_FixedDUR2,RV_OK,TK_NotStart,CO03YP0140,03Y SB Pipe Erection,,360,0,720,0,0,0,720,0,0,0,,,,2007-06-25 08:00,2007-10-29 17:00,,2007-05-03 08:00,2007-08-15 17:00,2007-05-03 08:00,2007-08-15 17:00,2007-05-03 08:00,2007-08-15 17:00,,2007-06-25 08:00,2007-10-29 17:00,,PT_Normal,,,,,gBG7aLI+TwWfUJbiF3CGPA,rlFAfmL62k+MV7BLh219AB,,,N,0,0,,,2007-02-01 02:41,2007-02-01 02:43,hbe4678,hbe4678,2007-05-03 08:00,2007-08-15 17:00,720
263,12456444,14517,6815854,13329,1,0,N,N,N,CP_Units,TT_Task,DT_FixedDUR2,RV_OK,TK_NotStart,CO03YP0150,03Y Punchlist / Test Piping,,1112.01666666667,0,360,0,0,0,360,0,0,0,,,,2008-01-08 08:01,2008-03-01 08:01,,2007-07-02 08:00,2007-08-22 17:00,2007-07-02 08:00,2007-08-22 17:00,2007-07-02 08:00,2007-08-22 17:00,,2008-01-08 08:01,2008-03-01 08:01,,PT_Normal,,,,,3GVX4ImpRzu4L83D9S6fQQ,5ysGVmSyvkCYQVj6OgsQZx,,,N,0,0,,,2007-02-01 02:41,2007-02-04 01:00,hbe4678,hbe4678,2007-07-02 08:00,2007-08-22 17:00,360
264,12456445,14517,6815854,13329,1,0,N,N,N,CP_Units,TT_Task,DT_FixedDUR2,RV_OK,TK_NotStart,CO03FP0130,03F LB Pipe Erection,,704.016666666667,0,272,0,0,0,272,0,0,0,,,,2007-10-27 08:01,2007-12-05 08:01,,2007-06-24 08:00,2007-08-01 17:00,2007-06-24 08:00,2007-08-01 17:00,2007-06-24 08:00,2007-08-01 17:00,,2007-10-27 08:01,2007-12-05 08:01,,PT_Normal,,,,,gDf8av7FRAuB3yUoonS/GA,oP0N/0gLQUCDUHEIX9q0jR,,,N,0,0,,,2007-02-01 02:41,2007-02-04 01:00,hbe4678,hbe4678,2007-06-24 08:00,2007-08-01 17:00,272
265,12456446,14517,6815854,13329,1,0,N,N,N,CP_Units,TT_Task,DT_FixedDUR2,RV_OK,TK_NotStart,CO03FP0140,03F SB Pipe Erection,,704.016666666667,0,272,0,0,0,272,0,0,0,,,,2007-11-03 08:01,2007-12-12 08:01,,2007-07-01 08:00,2007-08-08 17:00,2007-07-01 08:00,2007-08-08 17:00,2007-07-01 08:00,2007-08-08 17:00,,2007-11-03 08:01,2007-12-12 08:01,,PT_Normal,,,,,LMrx3Ph3Q5eqh4kb/soDHQ,fF3srcidCk6/cAmBg/tg2h,,,N,0,0,,,2007-02-01 02:41,2007-02-04 01:00,hbe4678,hbe4678,2007-07-01 08:00,2007-08-08 17:00,272
266,12456447,14517,6815854,13329,1,0,N,N,N,CP_Units,TT_Task,DT_FixedDUR2,RV_OK,TK_NotStart,CO03FP0150,03F Punchlist / Test Piping,,704.016666666667,0,136,0,0,0,136,0,0,0,,,,2007-11-29 08:01,2007-12-25 08:01,,2007-07-28 08:00,2007-08-15 17:00,2007-07-28 08:00,2007-08-15 17:00,2007-07-28 08:00,2007-08-15 17:00,,2007-11-29 08:01,2007-12-25 08:01,,PT_Normal,,,,,tLek/Tv9TTyWn+l+6XuPPA,puA3QKuUrUKe2lQS0buJnx,,,N,0,0,,,2007-02-01 02:41,2007-02-04 01:00,hbe4678,hbe4678,2007-07-28 08:00,2007-08-15 17:00,136
267,12456448,14517,6815854,13329,1,0,N,N,N,CP_Units,TT_Task,DT_FixedDUR2,RV_OK,TK_NotStart,CO03AP0130,03A LB Pipe Erection,,448,0,272,0,0,0,272,0,0,0,,,,2007-09-02 08:00,2007-11-01 17:00,,2007-06-28 08:00,2007-08-06 17:00,2007-06-28 08:00,2007-08-06 17:00,2007-06-28 08:00,2007-08-06 17:00,,2007-09-02 08:00,2007-11-01 17:00,,PT_Normal,,,,,qbkgoCFNSLa33X7EHx8M8g,x86sygYX8US/jHK1bqvc7B,,,N,0,0,,,2007-02-01 02:41,2007-02-01 02:43,hbe4678,hbe4678,2007-06-28 08:00,2007-08-06 17:00,272
268,12456449,14517,6815854,13329,1,0,N,N,N,CP_Units,TT_Task,DT_FixedDUR2,RV_OK,TK_NotStart,CO03AP0140,03A SB Pipe Erection,,448,0,272,0,0,0,272,0,0,0,,,,2007-09-09 08:00,2007-11-08 17:00,,2007-07-05 08:00,2007-08-13 17:00,2007-07-05 08:00,2007-08-13 17:00,2007-07-05 08:00,2007-08-13 17:00,,2007-09-09 08:00,2007-11-08 17:00,,PT_Normal,,,,,n3oL7/wzTUGVPyXahZmNRg,b0r/LgsZ3kGaOGDaexvmHR,,,N,0,0,,,2007-02-01 02:41,2007-02-01 02:43,hbe4678,hbe4678,2007-07-05 08:00,2007-08-13 17:00,272
269,12456450,14517,6815854,13329,1,0,N,N,N,CP_Units,TT_Task,DT_FixedDUR2,RV_OK,TK_NotStart,CO03AP0150,03A Punchlist / Test Piping,,496.016666666667,0,136,0,0,0,136,0,0,0,,,,2007-11-04 08:01,2007-11-24 08:01,,2007-08-01 08:00,2007-08-20 17:00,2007-08-01 08:00,2007-08-20 17:00,2007-08-01 08:00,2007-08-20 17:00,,2007-11-04 08:01,2007-11-24 08:01,,PT_Normal,,,,,a6wmBQp1SGaXZjI+8nJjTw,OqG73lUuokeb+eQcFfLcVh,,,N,0,0,,,2007-02-01 02:41,2007-02-04 01:00,hbe4678,hbe4678,2007-08-01 08:00,2007-08-20 17:00,136
270,12456451,14517,6815854,13329,1,0,N,N,N,CP_Units,TT_WBS,DT_FixedDUR2,RV_OK,TK_NotStart,WO030P0100,030 Above Ground Pipe,1342,1104.01666666667,3752,992,0,77938.96,77938.96,992,0,0,0,,,,2007-06-11 08:00,2008-03-25 08:01,,2007-04-26 08:00,2007-09-22 17:00,2007-04-26 08:00,2007-09-22 17:00,2007-04-26 08:00,2007-09-22 17:00,,2007-06-11 08:00,2008-03-25 08:01,,PT_Normal,,,,,OmQtnwWoQ3GDfi79qE12Bg,EKtppPgMI0mkKsmwVvJFsh,,,N,0,0,,,2007-02-01 02:41,2007-02-04 01:05,hbe4678,hbe4678,2007-04-26 08:00,2007-09-22 17:00,992
271,12456452,14517,6815854,13329,1,0,N,N,N,CP_Units,TT_Task,DT_FixedDUR2,RV_OK,TK_NotStart,CO03BP0130,03B LB Pipe Erection,,1104.01666666667,0,264,0,0,0,264,0,0,0,2007-07-28 08:00,,,2008-02-02 08:01,2008-03-11 08:01,,2007-07-28 08:00,2007-09-03 17:00,2007-07-28 08:00,2007-09-03 17:00,2007-07-28 08:00,2007-09-03 17:00,,2008-02-02 08:01,2008-03-11 08:01,CS_MSOA,PT_Normal,,,,,EzsYig0eSyCvTEqE/GSqzg,x86sygYX8US/jHK1bqvc7B,,,N,0,0,,,2007-02-01 02:41,2007-02-04 01:00,hbe4678,hbe4678,2007-07-28 08:00,2007-09-03 17:00,264
272,12456453,14517,6815854,13329,1,0,N,N,N,CP_Units,TT_Task,DT_FixedDUR2,RV_OK,TK_NotStart,CO03BP0140,03B SB Pipe Erection,,1104.01666666667,0,264,0,0,0,264,0,0,0,,,,2008-02-09 08:01,2008-03-18 08:01,,2007-08-04 08:00,2007-09-10 17:00,2007-08-04 08:00,2007-09-10 17:00,2007-08-04 08:00,2007-09-10 17:00,,2008-02-09 08:01,2008-03-18 08:01,,PT_Normal,,,,,MONk7fxFQNeW4279rha7hQ,b0r/LgsZ3kGaOGDaexvmHR,,,N,0,0,,,2007-02-01 02:41,2007-02-04 01:00,hbe4678,hbe4678,2007-08-04 08:00,2007-09-10 17:00,264
273,12456454,14517,6815854,13329,1,0,N,N,N,CP_Units,TT_Task,DT_FixedDUR2,RV_OK,TK_NotStart,CO03BP0150,03B Punchlist / Test Piping,,1104.01666666667,0,128,0,0,0,128,0,0,0,,,,2008-03-06 08:01,2008-03-25 08:01,,2007-08-30 08:00,2007-09-22 17:00,2007-08-30 08:00,2007-09-22 17:00,2007-08-30 08:00,2007-09-22 17:00,,2008-03-06 08:01,2008-03-25 08:01,,PT_Normal,,,,,Yw58lwboR/u7PO83308vqw,OqG73lUuokeb+eQcFfLcVh,,,N,0,0,,,2007-02-01 02:41,2007-02-04 01:00,hbe4678,hbe4678,2007-08-30 08:00,2007-09-22 17:00,128
274,12456455,14517,6815854,13329,1,0,N,N,N,CP_Units,TT_Task,DT_FixedDUR2,RV_OK,TK_NotStart,CO03CP0130,03C LB Pipe Erection,,696,0,272,0,0,0,272,0,0,0,,,,2007-10-30 08:00,2007-12-08 17:00,,2007-06-28 08:00,2007-08-06 17:00,2007-06-28 08:00,2007-08-06 17:00,2007-06-28 08:00,2007-08-06 17:00,,2007-10-30 08:00,2007-12-08 17:00,,PT_Normal,,,,,jVrqXwzIRDODMCt1iH3YxQ,tpYT3AKFpUqr8IY3nRSyjh,,,N,0,0,,,2007-02-01 02:41,2007-02-01 02:43,hbe4678,hbe4678,2007-06-28 08:00,2007-08-06 17:00,272
275,12456456,14517,6815854,13329,1,0,N,N,N,CP_Units,TT_Task,DT_FixedDUR2,RV_OK,TK_NotStart,CO03CP0140,03C SB Pipe Erection,,696,0,272,0,0,0,272,0,0,0,,,,2007-11-06 08:00,2007-12-15 17:00,,2007-07-05 08:00,2007-08-13 17:00,2007-07-05 08:00,2007-08-13 17:00,2007-07-05 08:00,2007-08-13 17:00,,2007-11-06 08:00,2007-12-15 17:00,,PT_Normal,,,,,JIcRN92eTSK/ClLH+CIyvQ,m9KhKEsyt0qxPiZh0cVfIR,,,N,0,0,,,2007-02-01 02:41,2007-02-01 02:43,hbe4678,hbe4678,2007-07-05 08:00,2007-08-13 17:00,272
276,12456457,14517,6815854,13329,1,0,N,N,N,CP_Units,TT_Task,DT_FixedDUR2,RV_OK,TK_NotStart,CO03CP0150,03C Punchlist / Test Piping,,696.016666666667,0,136,0,0,0,136,0,0,0,,,,2007-12-03 08:01,2007-12-29 08:01,,2007-08-01 08:00,2007-08-20 17:00,2007-08-01 08:00,2007-08-20 17:00,2007-08-01 08:00,2007-08-20 17:00,,2007-12-03 08:01,2007-12-29 08:01,,PT_Normal,,,,,lQKKScfHTO2cM425k7SsZQ,AmrPZ8VH0UWzCOlbLn4B5R,,,N,0,0,,,2007-02-01 02:41,2007-02-04 01:00,hbe4678,hbe4678,2007-08-01 08:00,2007-08-20 17:00,136
277,12456458,14517,6815856,13329,1,0,N,N,N,CP_Units,TT_Task,DT_FixedDUR2,RV_OK,TK_NotStart,CO03FS0120,03F Erect Misc Steel,,704.016666666667,0,288,0,0,0,288,0,0,0,,,,2007-10-08 08:01,2007-11-28 08:01,,2007-06-14 08:00,2007-07-25 17:00,2007-06-14 08:00,2007-07-25 17:00,2007-06-14 08:00,2007-07-25 17:00,,2007-10-08 08:01,2007-11-28 08:01,,PT_Normal,,,,,Z4fH6XAlR7iyZQ34f5vQwQ,s8+1hMCZxU+DCFXnUg4xQR,,,N,0,0,,,2007-02-01 02:41,2007-02-04 01:00,hbe4678,hbe4678,2007-06-14 08:00,2007-07-25 17:00,288
278,12456459,14517,6815856,13329,1,0,N,N,N,CP_Units,TT_Task,DT_FixedDUR2,RV_OK,TK_NotStart,CO03AS0120,03A Erect Misc Steel -  Structure,,448,0,192,0,0,0,192,0,0,0,,,,2007-08-26 08:00,2007-10-01 17:00,,2007-06-21 08:00,2007-07-18 17:00,2007-06-21 08:00,2007-07-18 17:00,2007-06-21 08:00,2007-07-18 17:00,,2007-08-26 08:00,2007-10-01 17:00,,PT_Normal,,,,,YlpMqRMcTyuac6WCbS9L6w,dHsoNNknbEusjODewIsJNR,,,N,0,0,,,2007-02-01 02:41,2007-02-01 02:43,hbe4678,hbe4678,2007-06-21 08:00,2007-07-18 17:00,192
279,12456460,14517,6815856,13329,1,0,N,N,N,CP_Units,TT_WBS,DT_FixedDUR2,RV_OK,TK_NotStart,WO030S0100,030 Erect Steel,1353,1256.01666666667,4120,768,0,6526.11,6526.11,768,0,0,0,,,,2007-05-21 08:00,2008-02-23 08:01,,2007-04-05 08:00,2007-07-25 17:00,2007-04-05 08:00,2007-07-25 17:00,2007-04-05 08:00,2007-07-25 17:00,,2007-05-21 08:00,2008-02-23 08:01,,PT_Normal,,,,,aqu12demQ66SAZZXxECXEw,BKM/1VGnTEW052tjIUqwxB,,,N,0,0,,,2007-02-01 02:41,2007-02-04 01:05,hbe4678,hbe4678,2007-04-05 08:00,2007-07-25 17:00,768
280,12456461,14517,6815856,13329,1,0,N,N,N,CP_Units,TT_Task,DT_FixedDUR2,RV_OK,TK_NotStart,CO03BS0120,03B Erect Misc Steel -  Structure,,1352.01666666667,0,192,0,0,0,192,0,0,0,,,,2008-01-26 08:01,2008-02-23 08:01,,2007-06-14 08:00,2007-07-11 17:00,2007-06-14 08:00,2007-07-11 17:00,2007-06-14 08:00,2007-07-11 17:00,,2008-01-26 08:01,2008-02-23 08:01,,PT_Normal,,,,,Mw/nTTpkS+WyXKifvrOnEg,dHsoNNknbEusjODewIsJNR,,,N,0,0,,,2007-02-01 02:41,2007-02-04 01:00,hbe4678,hbe4678,2007-06-14 08:00,2007-07-11 17:00,192
281,12456462,14517,6815856,13329,1,0,N,N,N,CP_Units,TT_Task,DT_FixedDUR2,RV_OK,TK_NotStart,CO03CS0120,03C Erect Misc Steel,,696,0,144,0,0,0,144,0,0,0,,,,2007-10-23 08:00,2007-11-12 17:00,,2007-06-21 08:00,2007-07-11 17:00,2007-06-21 08:00,2007-07-11 17:00,2007-06-21 08:00,2007-07-11 17:00,,2007-10-23 08:00,2007-11-12 17:00,,PT_Normal,,,,,7z8lKus/QmCa4N6kGnI0OA,1iD7fiugA06zqnJ5bvqXoR,,,N,0,0,,,2007-02-01 02:41,2007-02-01 02:43,hbe4678,hbe4678,2007-06-21 08:00,2007-07-11 17:00,144
282,12456463,14517,6815856,13329,1,0,N,N,N,CP_Units,TT_Task,DT_FixedDUR2,RV_OK,TK_NotStart,CO03DS0120,03D Erect Misc Steel,,784.016666666667,0,192,0,0,0,192,0,0,0,,,,2007-11-05 08:01,2007-12-03 08:01,,2007-06-21 08:00,2007-07-18 17:00,2007-06-21 08:00,2007-07-18 17:00,2007-06-21 08:00,2007-07-18 17:00,,2007-11-05 08:01,2007-12-03 08:01,,PT_Normal,,,,,zE8rh2NoQp+fuJL82kkT8g,YT7oYlWoP06iDnuS718aah,,,N,0,0,,,2007-02-01 02:41,2007-02-04 01:00,hbe4678,hbe4678,2007-06-21 08:00,2007-07-18 17:00,192
283,12456464,14517,6815856,13329,1,0,N,N,N,CP_Units,TT_Task,DT_FixedDUR2,RV_OK,TK_NotStart,CO03ES0120,03E Erect Misc Steel -  Structure,,464.016666666667,0,192,0,0,0,192,0,0,0,,,,2007-08-28 08:01,2007-10-08 08:01,,2007-06-21 08:00,2007-07-18 17:00,2007-06-21 08:00,2007-07-18 17:00,2007-06-21 08:00,2007-07-18 17:00,,2007-08-28 08:01,2007-10-08 08:01,,PT_Normal,,,,,JEDUAoQ8RwGJDJe1bB+onA,/yWqa+cPKEiCEMfVVA/CXx,,,N,0,0,,,2007-02-01 02:41,2007-02-04 01:00,hbe4678,hbe4678,2007-06-21 08:00,2007-07-18 17:00,192
284,12456465,14517,6815856,13329,1,0,N,N,N,CP_Units,TT_Task,DT_FixedDUR2,RV_OK,TK_NotStart,CO03YS0110,03Y Erect Structural Steel,,312,0,144,0,0,0,144,0,0,0,,,,2007-05-21 08:00,2007-06-10 17:00,,2007-04-05 08:00,2007-04-25 17:00,2007-04-05 08:00,2007-04-25 17:00,2007-04-05 08:00,2007-04-25 17:00,,2007-05-21 08:00,2007-06-10 17:00,,PT_Normal,,,,,AsstLiueT3KnSoSCUgKrmA,KgjyNTnGG0uxmsiniXGSCB,,,N,0,0,,,2007-02-01 02:41,2007-02-01 02:43,hbe4678,hbe4678,2007-04-05 08:00,2007-04-25 17:00,144
285,12456466,14517,6815857,13329,0,0,N,N,N,CP_Units,TT_FinMile,DT_FixedDUR2,RV_OK,TK_NotStart,CO03BT0110,03B Mechanical Completion,,544.016666666667,72,0,0,0,0,0,0,0,0,,,,2008-04-12 08:01,2008-04-12 08:01,,2008-01-22 17:00,2008-01-22 17:00,2008-01-22 17:00,2008-01-22 17:00,2008-01-22 17:00,2008-01-22 17:00,,2008-04-12 08:01,2008-04-12 08:01,,PT_Normal,,,,,ew+GCMl8Q920ko3FpFvIxw,FV6Sc7iQ0Ey3sydIbzSvyh,,,N,0,0,,,2007-02-01 02:41,2007-02-04 01:00,hbe4678,hbe4678,2008-01-22 17:00,2008-01-22 17:00,0
286,12456467,14517,6815857,13332,0,0,N,N,N,CP_Units,TT_FinMile,DT_FixedDUR2,RV_OK,TK_NotStart,SC03BT0120,03B RFSU,,552.016666666667,1024,0,0,0,0,0,0,0,0,,,,2008-04-12 08:01,2008-04-12 08:01,,2008-02-02 17:00,2008-02-02 17:00,2008-02-02 17:00,2008-02-02 17:00,2008-02-02 17:00,2008-02-02 17:00,,2008-04-12 08:01,2008-04-12 08:01,,PT_Normal,,,,,YP3Tn8XISh2iOMnEzR++Mw,MC3uoYvA9UyTSY1lEvTZzB,,,N,0,0,,,2007-02-01 02:41,2007-02-04 01:00,hbe4678,hbe4678,2008-02-02 17:00,2008-02-02 17:00,0
287,12456468,14517,6815857,13329,0,0,N,N,N,CP_Units,TT_FinMile,DT_FixedDUR2,RV_OK,TK_NotStart,CO03CT0110,03C Mechanical Completion,,-79.9833333333333,56,0,0,0,0,0,0,0,0,,,,2008-01-15 08:01,2008-01-15 08:01,,2008-01-26 17:00,2008-01-26 17:00,2008-01-26 17:00,2008-01-26 17:00,2008-01-26 17:00,2008-01-26 17:00,,2008-01-15 08:01,2008-01-15 08:01,,PT_Normal,,,,,oNUURg2wRsaMIQgXzdIGtQ,lSvAZmCLfUC+CIXcM1zz/x,,,N,0,0,,,2007-02-01 02:41,2007-02-04 01:00,hbe4678,hbe4678,2008-01-26 17:00,2008-01-26 17:00,0
288,12456469,14517,6815857,13332,0,0,N,N,N,CP_Units,TT_FinMile,DT_FixedDUR2,RV_OK,TK_NotStart,SC03CT0120,03C RFSU,,-183.983333333333,192,0,0,0,0,0,0,0,0,,,,2008-01-15 08:01,2008-01-15 08:01,,2008-02-06 17:00,2008-02-06 17:00,2008-02-06 17:00,2008-02-06 17:00,2008-02-06 17:00,2008-02-06 17:00,,2008-01-15 08:01,2008-01-15 08:01,,PT_Normal,,,,,kDz3GGf/TG+vgsekSTQGTw,YFRyIv5310mH00eZCCcW5R,,,N,0,0,,,2007-02-01 02:41,2007-02-04 01:00,hbe4678,hbe4678,2008-02-06 17:00,2008-02-06 17:00,0
289,12456470,14517,6815857,13329,0,0,N,N,N,CP_Units,TT_FinMile,DT_FixedDUR2,RV_OK,TK_NotStart,CO03DT0110,03D Mechanical Completion,,-95.9833333333333,40,0,0,0,0,0,0,0,0,,,,2008-01-15 08:01,2008-01-15 08:01,,2008-01-28 17:00,2008-01-28 17:00,2008-01-28 17:00,2008-01-28 17:00,2008-01-28 17:00,2008-01-28 17:00,,2008-01-15 08:01,2008-01-15 08:01,,PT_Normal,,,,,b4GV5lD+SAKQWGJexoAf9w,yKi0bYQz5keUXI54uvcC1h,,,N,0,0,,,2007-02-01 02:41,2007-02-04 01:00,hbe4678,hbe4678,2008-01-28 17:00,2008-01-28 17:00,0
290,12456471,14517,6815857,13332,0,0,N,N,N,CP_Units,TT_FinMile,DT_FixedDUR2,RV_OK,TK_NotStart,SC03DT0120,03D RFSU,,-159.983333333333,216,0,0,0,0,0,0,0,0,,,,2008-01-15 08:01,2008-01-15 08:01,,2008-02-03 17:00,2008-02-03 17:00,2008-02-03 17:00,2008-02-03 17:00,2008-02-03 17:00,2008-02-03 17:00,,2008-01-15 08:01,2008-01-15 08:01,,PT_Normal,,,,,SiXaY5UmQUaTsWBFojm3ng,ae0dleeK+UCuHlsNQfQgLh,,,N,0,0,,,2007-02-01 02:41,2007-02-04 01:00,hbe4678,hbe4678,2008-02-03 17:00,2008-02-03 17:00,0
291,12456472,14517,6815857,13329,0,0,N,N,N,CP_Units,TT_FinMile,DT_FixedDUR2,RV_OK,TK_NotStart,CO03ET0110,03E Mechanical Completion,,-135.983333333333,0,0,0,0,0,0,0,0,0,,,,2008-01-15 08:01,2008-01-15 08:01,,2008-02-03 17:00,2008-02-03 17:00,2008-02-03 17:00,2008-02-03 17:00,2008-02-03 17:00,2008-02-03 17:00,,2008-01-15 08:01,2008-01-15 08:01,,PT_Normal,,,,,/xxy0DgJTDKwnDX0QVcuaQ,+aB6CMOt00CbCgxxhkP5dx,,,N,0,0,,,2007-02-01 02:41,2007-02-04 01:00,hbe4678,hbe4678,2008-02-03 17:00,2008-02-03 17:00,0
292,12456473,14517,6815857,13332,0,0,N,N,N,CP_Units,TT_FinMile,DT_FixedDUR2,RV_OK,TK_NotStart,SC03ET0120,03E RFSU,,-303.983333333333,72,0,0,0,0,0,0,0,0,,,,2008-01-15 08:01,2008-01-15 08:01,,2008-02-21 17:00,2008-02-21 17:00,2008-02-21 17:00,2008-02-21 17:00,2008-02-21 17:00,2008-02-21 17:00,,2008-01-15 08:01,2008-01-15 08:01,,PT_Normal,,,,,9FW+WkQXS5SH7ElQD7Eu/w,etL7rt8mF06eZ4Tq5AMduB,,,N,0,0,,,2007-02-01 02:41,2007-02-04 01:00,hbe4678,hbe4678,2008-02-21 17:00,2008-02-21 17:00,0
293,12456474,14517,6815857,13329,0,0,N,N,N,CP_Units,TT_FinMile,DT_FixedDUR2,RV_OK,TK_NotStart,CO03YT0110,03Y Mechanical Completion,,376.016666666667,48,0,0,0,0,0,0,0,0,,,,2008-04-12 08:01,2008-04-12 08:01,,2008-02-16 17:00,2008-02-16 17:00,2008-02-16 17:00,2008-02-16 17:00,2008-02-16 17:00,2008-02-16 17:00,,2008-04-12 08:01,2008-04-12 08:01,,PT_Normal,,,,,YqW76k9zQAyA845obdCndw,IUtsMIaVBkGQVou2QKqQuh,,,N,0,0,,,2007-02-01 02:41,2007-02-04 01:00,hbe4678,hbe4678,2008-02-16 17:00,2008-02-16 17:00,0
294,12456475,14517,6815857,13332,0,0,N,N,N,CP_Units,TT_FinMile,DT_FixedDUR2,RV_OK,TK_NotStart,SC03YT0120,03Y RFSU,,384.016666666667,856,0,0,0,0,0,0,0,0,,,,2008-04-12 08:01,2008-04-12 08:01,,2008-02-23 17:00,2008-02-23 17:00,2008-02-23 17:00,2008-02-23 17:00,2008-02-23 17:00,2008-02-23 17:00,,2008-04-12 08:01,2008-04-12 08:01,,PT_Normal,,,,,vv5X8AKRQge8bdyXka2kHQ,gPEr/v0T8U6kchFYduyozx,,,N,0,0,,,2007-02-01 02:41,2007-02-04 01:00,hbe4678,hbe4678,2008-02-23 17:00,2008-02-23 17:00,0
295,12456476,14517,6815857,13332,0,0,N,N,N,CP_Units,TT_FinMile,DT_FixedDUR2,RV_OK,TK_NotStart,SC03UT0120,03U RFSU,,3040.01666666667,3512,0,0,0,0,0,0,0,0,,,,2008-04-12 08:01,2008-04-12 08:01,,2007-03-28 17:00,2007-03-28 17:00,2007-03-28 17:00,2007-03-28 17:00,2007-03-28 17:00,2007-03-28 17:00,,2008-04-12 08:01,2008-04-12 08:01,,PT_Normal,,,,,K/twWfa1RjGlD9OFkb2COQ,aRuYIKbjYkm4iebHqqkISB,,,N,0,0,,,2007-02-01 02:41,2007-02-04 01:00,hbe4678,hbe4678,2007-03-28 17:00,2007-03-28 17:00,0
296,12456477,14517,6815857,13329,0,0,N,N,N,CP_Units,TT_FinMile,DT_FixedDUR2,RV_OK,TK_NotStart,CO03UDT110,03U Mechanical Completion,,2408.01666666667,0,0,0,0,0,0,0,0,0,,,,2008-04-12 08:01,2008-04-12 08:01,,2007-03-28 17:00,2007-03-28 17:00,2007-03-28 17:00,2007-03-28 17:00,2007-03-28 17:00,2007-03-28 17:00,,2008-04-12 08:01,2008-04-12 08:01,,PT_Normal,,,,,aCQDU9ztTvKpHHDEHDVKAg,alUULORwXUiuKZpdsvTDzR,,,N,0,0,,,2007-02-01 02:41,2007-02-04 01:00,hbe4678,hbe4678,2007-03-28 17:00,2007-03-28 17:00,0
297,12456478,14517,6815857,13329,0,0,N,N,N,CP_Units,TT_FinMile,DT_FixedDUR2,RV_OK,TK_NotStart,CO03FT0110,03F Mechanical Completion,,64.0166666666667,80,0,0,0,0,0,0,0,0,,,,2008-01-22 08:01,2008-01-22 08:01,,2008-01-12 17:00,2008-01-12 17:00,2008-01-12 17:00,2008-01-12 17:00,2008-01-12 17:00,2008-01-12 17:00,,2008-01-22 08:01,2008-01-22 08:01,,PT_Normal,,,,,hhX6fvl8RBKWdN2YYqbQjQ,mvzeeHsPsk6Iz3+YMedweh,,,N,0,0,,,2007-02-01 02:41,2007-02-04 01:00,hbe4678,hbe4678,2008-01-12 17:00,2008-01-12 17:00,0
298,12456479,14517,6815857,13332,0,0,N,N,N,CP_Units,TT_FinMile,DT_FixedDUR2,RV_OK,TK_NotStart,SC03FT0120,03F RFSU,,-15.9833333333333,360,0,0,0,0,0,0,0,0,,,,2008-01-22 08:01,2008-01-22 08:01,,2008-01-23 17:00,2008-01-23 17:00,2008-01-23 17:00,2008-01-23 17:00,2008-01-23 17:00,2008-01-23 17:00,,2008-01-22 08:01,2008-01-22 08:01,,PT_Normal,,,,,K4xdrkqqSQO39na/HogWdA,vjj3rMfBSE6e//AT0+aRXB,,,N,0,0,,,2007-02-01 02:41,2007-02-04 01:00,hbe4678,hbe4678,2008-01-23 17:00,2008-01-23 17:00,0
299,12456480,14517,6815857,13329,0,0,N,N,N,CP_Units,TT_FinMile,DT_FixedDUR2,RV_OK,TK_NotStart,CO03AT0110,03A Mechanical Completion,,-207.983333333333,72,0,0,0,0,0,0,0,0,,,,2007-12-04 08:01,2007-12-04 08:01,,2008-01-08 17:00,2008-01-08 17:00,2008-01-08 17:00,2008-01-08 17:00,2008-01-08 17:00,2008-01-08 17:00,,2007-12-04 08:01,2007-12-04 08:01,,PT_Normal,,,,,erFXLk3eTWGpIVJSd8eg0w,FV6Sc7iQ0Ey3sydIbzSvyh,,,N,0,0,,,2007-02-01 02:41,2007-02-04 01:00,hbe4678,hbe4678,2008-01-08 17:00,2008-01-08 17:00,0
300,12456481,14517,6815857,13332,0,0,N,N,N,CP_Units,TT_FinMile,DT_FixedDUR2,RV_OK,TK_NotStart,SC03AT0120,03A RFSU,,-375.983333333333,0,0,0,0,0,0,0,0,0,,,,2007-12-04 08:01,2007-12-04 08:01,,2008-01-19 17:00,2008-01-19 17:00,2008-01-19 17:00,2008-01-19 17:00,2008-01-19 17:00,2008-01-19 17:00,,2007-12-04 08:01,2007-12-04 08:01,,PT_Normal,,,,,HFKCQfFiReGjw9nbjAFftA,MC3uoYvA9UyTSY1lEvTZzB,,,N,0,0,,,2007-02-01 02:41,2007-02-04 01:00,hbe4678,hbe4678,2008-01-19 17:00,2008-01-19 17:00,0
301,12456482,14517,6815858,13329,1,0,N,N,N,CP_Units,TT_Task,DT_FixedDUR2,RV_OK,TK_Active,CO03FU3110,03F U/G Earthing Installation,,1288.01666666667,112,64,0,0,0,64,0,0,0,,2007-01-01 00:00,,2007-10-22 08:01,2007-10-31 08:01,,2007-03-26 08:00,2007-04-03 17:00,2007-03-26 08:00,2007-04-03 17:00,2007-03-21 08:00,2007-03-29 17:00,,2007-10-22 08:01,2007-10-31 08:01,,PT_Normal,,,,,Yqe7TSQHSMKzyCnvWe6Nzw,+KIqfeZPKUOZfeqwQkS81h,,,N,0,0,,,2007-02-01 02:41,2007-02-04 01:00,hbe4678,hbe4678,2007-03-26 08:00,2007-04-03 17:00,64
302,12456483,14517,6815858,13329,1,0,N,N,N,CP_Units,TT_Task,DT_FixedDUR2,RV_OK,TK_Active,CO03AU3110,03A U/G Earthing Installation,,1080,0,48,0,0,0,64,0,0,0,,2006-11-25 00:00,,2007-09-02 08:00,2007-09-08 17:00,2007-03-14 17:00,2007-03-28 08:00,2007-04-03 17:00,2007-03-28 08:00,2007-04-03 17:00,2007-03-06 08:00,2007-03-14 17:00,,2007-09-02 08:00,2007-09-08 17:00,,PT_Normal,,,,,2RwFZyoDQkelidEGk5Kwvg,tvoVAIkgtUmYQoD3wUMkjx,,,N,0,0,,,2007-02-01 02:41,2007-02-01 02:43,hbe4678,hbe4678,2007-03-28 08:00,2007-04-03 17:00,48
303,12456484,14517,6815858,13329,1,0,N,N,N,CP_Units,TT_WBS,DT_FixedDUR2,RV_OK,TK_Active,WO030U3100,030 Install U/G Electrical,1348,1832.01666666667,4840,392,202.01,2522.79,2724.8,400,0,0,0,,2006-11-25 00:00,,2007-08-25 08:00,2008-02-02 08:01,,2007-02-14 08:00,2007-04-11 17:00,2007-02-14 08:00,2007-04-11 17:00,2007-02-08 08:00,2007-04-07 17:00,,2007-08-25 08:00,2008-02-02 08:01,,PT_Normal,,,,,xBR64HHcQPCj1s2woob9Tw,W5AL2USsLkKtKeHoxbXGYh,,,N,0,0,,,2007-02-01 02:41,2007-02-04 01:05,hbe4678,hbe4678,2007-02-14 08:00,2007-04-11 17:00,392
304,12456485,14517,6815858,13329,1,0,N,N,N,CP_Units,TT_Task,DT_FixedDUR2,RV_OK,TK_Active,CO03BU3110,03B U/G Earthing Installation,,1896.01666666667,0,64,0,0,0,64,0,0,0,,2006-12-01 00:00,,2008-01-23 08:01,2008-02-02 08:01,,2007-03-25 08:00,2007-04-02 17:00,2007-03-25 08:00,2007-04-02 17:00,2007-03-20 08:00,2007-03-28 17:00,,2008-01-23 08:01,2008-02-02 08:01,,PT_Normal,,,,,lAxvEQApSPaSv6+BudrCmw,tvoVAIkgtUmYQoD3wUMkjx,,,N,0,0,,,2007-02-01 02:41,2007-02-04 01:00,hbe4678,hbe4678,2007-03-25 08:00,2007-04-02 17:00,64
305,12456486,14517,6815858,13329,1,0,N,N,N,CP_Units,TT_Task,DT_FixedDUR2,RV_OK,TK_Active,CO03CU3110,03C U/G Earthing Installation,,1328,64,64,0,0,0,64,0,0,0,,2006-12-01 00:00,,2007-10-28 08:00,2007-11-05 17:00,,2007-03-26 08:00,2007-04-03 17:00,2007-03-26 08:00,2007-04-03 17:00,2007-03-21 08:00,2007-03-29 17:00,,2007-10-28 08:00,2007-11-05 17:00,,PT_Normal,,,,,TVSLNfzeQ9WkIvSCb5wucQ,kDhu/3SLxU6W7RAzGMmLKB,,,N,0,0,,,2007-02-01 02:41,2007-02-01 02:43,hbe4678,hbe4678,2007-03-26 08:00,2007-04-03 17:00,64
306,12456487,14517,6815858,13329,1,0,N,N,N,CP_Units,TT_Task,DT_FixedDUR2,RV_OK,TK_Active,CO03DU3110,03D U/G Earthing Installation,,1592.01666666667,80,32,0,0,0,32,0,0,0,,2006-12-01 00:00,,2007-10-27 08:01,2007-10-31 08:01,,2007-02-14 08:00,2007-02-18 17:00,2007-02-14 08:00,2007-02-18 17:00,2007-02-08 08:00,2007-02-12 17:00,,2007-10-27 08:01,2007-10-31 08:01,,PT_Normal,,,,,BNK6YJ9sTj+xYP9kxJ8dhg,mF8cQrUWrUSK9eOFfsnZSB,,,N,0,0,,,2007-02-01 02:41,2007-02-04 01:00,hbe4678,hbe4678,2007-02-14 08:00,2007-02-18 17:00,32
307,12456488,14517,6815858,13329,1,0,N,N,N,CP_Units,TT_Task,DT_FixedDUR2,RV_OK,TK_Active,CO03EU3110,03E U/G Earthing Installation,,1016,152,96,0,0,0,192,0,0,0,,2006-12-01 00:00,,2007-08-25 08:00,2007-09-06 17:00,,2007-03-29 08:00,2007-04-11 17:00,2007-03-29 08:00,2007-04-11 17:00,2007-03-11 08:00,2007-04-07 17:00,,2007-08-25 08:00,2007-09-06 17:00,,PT_Normal,,,,,mSdi1EMqTkerbIR3JsIhxQ,sT5MmMAIYUi97myOO892HR,,,N,0,0,,,2007-02-01 02:41,2007-02-01 02:43,hbe4678,hbe4678,2007-03-29 08:00,2007-04-11 17:00,96
308,12456489,14517,6815859,13329,1,0,N,N,N,CP_Units,TT_WBS,DT_FixedDUR2,RV_OK,TK_Active,WO030U4100,030 U/G Piping Installation,1348,1832.01666666667,4936,424,7234.82,32776.88,40011.7,1152,0,0,0,,2006-12-09 08:00,,2007-07-21 08:00,2008-01-19 08:01,,2007-01-27 08:00,2007-03-28 17:00,2007-01-27 08:00,2007-03-28 17:00,2006-12-09 08:00,2007-05-31 17:00,,2007-07-21 08:00,2008-01-19 08:01,,PT_Normal,,,,,gaCgrGFsQNG6+oB3UXxpow,VnNlHKUlI0WrNugyPJox8h,,,N,0,0,,,2007-02-01 02:41,2007-02-04 01:05,hbe4678,hbe4678,2007-01-27 08:00,2007-03-28 17:00,424
309,12456490,14517,6815859,13329,1,0,N,N,N,CP_Units,TT_Task,DT_FixedDUR2,RV_OK,TK_NotStart,CO03BU4120,03B U/G Piping Installation,,1896.01666666667,0,128,0,0,0,128,0,0,0,,,,2007-12-31 08:01,2008-01-19 08:01,,2007-03-01 08:00,2007-03-19 17:00,2007-03-01 08:00,2007-03-19 17:00,2007-03-01 08:00,2007-03-19 17:00,,2007-12-31 08:01,2008-01-19 08:01,,PT_Normal,,,,,DbGRmsEyQXCZbKQN6ZfsiA,InC04j8qzk+nSC7PHO2EwB,,,N,0,0,,,2007-02-01 02:41,2007-02-04 01:00,hbe4678,hbe4678,2007-03-01 08:00,2007-03-19 17:00,128
310,12456491,14517,6815859,13329,1,0,N,N,N,CP_Units,TT_Task,DT_FixedDUR2,RV_OK,TK_NotStart,CO03CU4120,03C U/G Piping Installation,,1328,0,136,0,0,0,136,0,0,0,,,,2007-09-11 08:00,2007-10-22 17:00,,2007-03-01 08:00,2007-03-20 17:00,2007-03-01 08:00,2007-03-20 17:00,2007-03-01 08:00,2007-03-20 17:00,,2007-09-11 08:00,2007-10-22 17:00,,PT_Normal,,,,,MLN8BRi4TgSAuxQl7fPmeg,4r2Yx9JOIku/C4/eKTNYdx,,,N,0,0,,,2007-02-01 02:41,2007-02-01 02:43,hbe4678,hbe4678,2007-03-01 08:00,2007-03-20 17:00,136
311,12456492,14517,6815859,13329,1,0,N,N,N,CP_Units,TT_Task,DT_FixedDUR2,RV_OK,TK_NotStart,CO03DU4120,03D U/G Piping Installation,,1592.01666666667,0,64,0,0,0,64,0,0,0,2006-12-15 08:00,,,2007-09-19 08:01,2007-10-08 08:01,,2007-01-27 08:00,2007-02-04 17:00,2007-01-27 08:00,2007-02-04 17:00,2007-01-27 08:00,2007-02-04 17:00,,2007-09-19 08:01,2007-10-08 08:01,CS_MSOA,PT_Normal,,,,,LcLD5FUbTNm9iZAkFtvb+g,VzYfpRPoREqHQJh4giItvB,,,N,0,0,,,2007-02-01 02:41,2007-02-04 01:00,hbe4678,hbe4678,2007-01-27 08:00,2007-02-04 17:00,64
312,12456493,14517,6815859,13329,1,0,N,N,N,CP_Units,TT_Task,DT_FixedDUR2,RV_OK,TK_NotStart,CO03EU4120,03E U/G Piping Installation,,968,0,192,0,0,0,192,0,0,0,,,,2007-07-21 08:00,2007-08-16 17:00,,2007-03-01 08:00,2007-03-28 17:00,2007-03-01 08:00,2007-03-28 17:00,2007-03-01 08:00,2007-03-28 17:00,,2007-07-21 08:00,2007-08-16 17:00,,PT_Normal,,,,,qxaNCERBSyuPrh1PoC7OoA,KDcaksOD9UG1IxvdfUBipR,,,N,0,0,,,2007-02-01 02:41,2007-02-01 02:43,hbe4678,hbe4678,2007-03-01 08:00,2007-03-28 17:00,192
313,12456494,14517,6815859,13329,1,0,N,N,N,CP_Units,TT_Task,DT_FixedDUR2,RV_OK,TK_Active,CO03UP0150,03U LB Pipe Erection (Firewater Piping),,1696.01666666667,0,152,0,0,0,1152,0,0,0,2006-12-09 08:00,2006-12-09 08:00,,2007-11-12 08:01,2007-12-04 08:01,2007-02-10 17:00,2007-02-15 08:00,2007-03-08 17:00,2007-02-15 08:00,2007-03-08 17:00,2006-12-09 08:00,2007-05-31 17:00,,2007-11-12 08:01,2007-12-04 08:01,CS_MSOA,PT_Normal,,,,,2P+dC89WS1WRMpLe2xGgXQ,DSlGAlfEMEujjF7J5svZqR,,,N,0,0,,,2007-02-01 02:41,2007-02-04 01:00,hbe4678,hbe4678,2007-02-15 08:00,2007-03-08 17:00,152
314,12456495,14517,6815859,13329,1,0,N,N,N,CP_Units,TT_Task,DT_FixedDUR2,RV_OK,TK_NotStart,CO03FU4120,03F U/G Piping Installation,,1240.01666666667,0,136,0,0,0,136,0,0,0,,,,2007-08-29 08:01,2007-09-24 08:01,,2007-03-01 08:00,2007-03-20 17:00,2007-03-01 08:00,2007-03-20 17:00,2007-03-01 08:00,2007-03-20 17:00,,2007-08-29 08:01,2007-09-24 08:01,,PT_Normal,,,,,o+qcPj6lRWubja9QxtfvIw,owH2IULspUm8lJd4nywEhB,,,N,0,0,,,2007-02-01 02:41,2007-02-04 01:00,hbe4678,hbe4678,2007-03-01 08:00,2007-03-20 17:00,136
315,12456496,14517,6815859,13329,1,0,N,N,N,CP_Units,TT_Task,DT_FixedDUR2,RV_OK,TK_NotStart,CO03AU4120,03A U/G Piping Installation,,1080,0,136,0,0,0,136,0,0,0,,,,2007-08-06 08:00,2007-08-25 17:00,,2007-03-01 08:00,2007-03-20 17:00,2007-03-01 08:00,2007-03-20 17:00,2007-03-01 08:00,2007-03-20 17:00,,2007-08-06 08:00,2007-08-25 17:00,,PT_Normal,,,,,ZL+yUFvmQWucdpHdQTDCFw,InC04j8qzk+nSC7PHO2EwB,,,N,0,0,,,2007-02-01 02:41,2007-02-01 02:43,hbe4678,hbe4678,2007-03-01 08:00,2007-03-20 17:00,136
316,12456497,14517,6815860,13329,1,0,N,N,N,CP_Units,TT_Task,DT_FixedDUR2,RV_OK,TK_NotStart,CO03DV1130,03D Paint Touch-up - Equipment (& 2002-F Tank),,1512,1607.98333333333,40,0,0,0,40,0,0,0,,,,2008-01-09 08:01,2008-01-15 08:01,,2007-05-06 08:01,2007-05-12 08:01,2007-05-06 08:01,2007-05-12 08:01,2007-05-06 08:01,2007-05-12 08:01,,2008-01-09 08:01,2008-01-15 08:01,,PT_Normal,,,,,6CLUuhDOThqGcuxpsiptpw,+4D5KbzeekKCfmpqlXLjKh,,,N,0,0,,,2007-02-01 02:41,2007-02-04 01:00,hbe4678,hbe4678,2007-05-06 08:01,2007-05-12 08:01,40
317,12456498,14517,6815860,13329,1,0,N,N,N,CP_Units,TT_Task,DT_FixedDUR2,RV_OK,TK_Active,CO03EV1110,03E Paint Fabricated Pipe Spools,,1368.01666666667,904,128,0,0,0,128,0,0,0,,2006-11-23 00:00,,2007-10-29 08:01,2007-11-17 08:01,,2007-03-21 08:00,2007-04-08 17:00,2007-03-21 08:00,2007-04-08 17:00,2007-01-16 08:00,2007-02-03 17:00,,2007-10-29 08:01,2007-11-17 08:01,,PT_Normal,,,,,FJEbdbPPRC2CcFskmefXgA,8ZtROZh9+0Syhkihf0DcVR,,,N,0,0,,,2007-02-01 02:41,2007-02-04 01:00,hbe4678,hbe4678,2007-03-21 08:00,2007-04-08 17:00,128
318,12456499,14517,6815860,13329,1,0,N,N,N,CP_Units,TT_Task,DT_FixedDUR2,RV_OK,TK_NotStart,CO03EV1120,03E Paint Touch-up - Piping,,464.016666666667,0,128,0,0,0,128,0,0,0,,,,2007-11-24 08:01,2007-12-12 08:01,,2007-08-26 08:00,2007-09-12 17:00,2007-08-26 08:00,2007-09-12 17:00,2007-08-26 08:00,2007-09-12 17:00,,2007-11-24 08:01,2007-12-12 08:01,,PT_Normal,,,,,twH9VsOXRIW4JU94gvVehA,g5Q1gnv7l0iiWLwb7qOfrB,,,N,0,0,,,2007-02-01 02:41,2007-02-04 01:00,hbe4678,hbe4678,2007-08-26 08:00,2007-09-12 17:00,128
319,12456500,14517,6815860,13329,1,0,N,N,N,CP_Units,TT_Task,DT_FixedDUR2,RV_OK,TK_NotStart,CO03EV1130,03E Paint Touch-up - Equipment,,464.016666666667,0,128,0,0,0,128,0,0,0,,,,2007-11-24 08:01,2007-12-12 08:01,,2007-08-26 08:00,2007-09-12 17:00,2007-08-26 08:00,2007-09-12 17:00,2007-08-26 08:00,2007-09-12 17:00,,2007-11-24 08:01,2007-12-12 08:01,,PT_Normal,,,,,X63NcogASWCsFuWMBe3w+Q,MhVlCrUoI0K+mSIqrVBoxR,,,N,0,0,,,2007-02-01 02:41,2007-02-04 01:00,hbe4678,hbe4678,2007-08-26 08:00,2007-09-12 17:00,128
320,12456501,14517,6815860,13329,1,0,N,N,N,CP_Units,TT_Task,DT_FixedDUR2,RV_OK,TK_Active,CO03YV1110,03Y Paint Fabricated Pipe Spools,,1232,0,224,0,0,0,384,0,0,0,,2006-12-13 08:00,,2007-08-11 08:00,2007-09-11 17:00,2007-02-13 17:00,2007-02-12 08:00,2007-03-15 17:00,2007-02-12 08:00,2007-03-15 17:00,2006-12-13 08:00,2007-02-13 17:00,,2007-08-11 08:00,2007-09-11 17:00,,PT_Normal,,,,,4b79woWARbOzqVnuBc2BUA,pxry+4AfuEuHSRCGjKkp/B,,,N,0,0,,,2007-02-01 02:41,2007-02-01 02:43,hbe4678,hbe4678,2007-02-12 08:00,2007-03-15 17:00,224
321,12456502,14517,6815860,13329,1,0,N,N,N,CP_Units,TT_Task,DT_FixedDUR2,RV_OK,TK_NotStart,CO03YV1120,03Y Paint Touch-up - Piping,,1400.01666666667,1024,384,0,0,0,384,0,0,0,,,,2008-02-16 08:01,2008-04-12 08:01,,2007-06-28 08:00,2007-08-22 17:00,2007-06-28 08:00,2007-08-22 17:00,2007-06-28 08:00,2007-08-22 17:00,,2008-02-16 08:01,2008-04-12 08:01,,PT_Normal,,,,,Z8XlgemXT0SkSJUTzifvxg,TVF52bVQnUG9Pw8Tw6qnDx,,,N,0,0,,,2007-02-01 02:41,2007-02-04 01:00,hbe4678,hbe4678,2007-06-28 08:00,2007-08-22 17:00,384
322,12456503,14517,6815860,13329,1,0,N,N,N,CP_Units,TT_Task,DT_FixedDUR2,RV_OK,TK_Active,CO03FV1110,03F Paint Fabricated Pipe Spools,,1464.01666666667,760,80,0,0,0,80,0,0,0,,2006-11-23 00:00,,2007-11-12 08:01,2007-11-24 08:01,,2007-03-21 08:00,2007-04-01 17:00,2007-03-21 08:00,2007-04-01 17:00,2007-01-23 08:00,2007-02-03 17:00,,2007-11-12 08:01,2007-11-24 08:01,,PT_Normal,,,,,on3I6z/GTCCEpeemIhgOYA,E50If40QYE2Vl09pFs3mlh,,,N,0,0,,,2007-02-01 02:41,2007-02-04 01:00,hbe4678,hbe4678,2007-03-21 08:00,2007-04-01 17:00,80
323,12456504,14517,6815860,13329,1,0,N,N,N,CP_Units,TT_Task,DT_FixedDUR2,RV_OK,TK_NotStart,CO03FV1120,03F Paint Touch-up - Piping,,896.016666666667,832,80,0,0,0,80,0,0,0,,,,2008-01-10 08:01,2008-01-22 08:01,,2007-08-05 08:00,2007-08-15 17:00,2007-08-05 08:00,2007-08-15 17:00,2007-08-05 08:00,2007-08-15 17:00,,2008-01-10 08:01,2008-01-22 08:01,,PT_Normal,,,,,pe1Xnk/gT7a2uL95XqDAFA,jDP3HmN8eUSIrl/IUSm8+x,,,N,0,0,,,2007-02-01 02:41,2007-02-04 01:00,hbe4678,hbe4678,2007-08-05 08:00,2007-08-15 17:00,80
324,12456505,14517,6815860,13329,1,0,N,N,N,CP_Units,TT_Task,DT_FixedDUR2,RV_OK,TK_NotStart,CO03FV1130,03F Paint Touch-up - Equipment,,1464.01666666667,384,80,0,0,0,80,0,0,0,,,,2007-12-08 08:01,2007-12-25 08:01,,2007-04-16 08:00,2007-04-26 17:00,2007-04-16 08:00,2007-04-26 17:00,2007-04-16 08:00,2007-04-26 17:00,,2007-12-08 08:01,2007-12-25 08:01,,PT_Normal,,,,,ppGxurEQSYuxaZGIwBtXqg,DLRKRNimq0mguRKFHNUt+h,,,N,0,0,,,2007-02-01 02:41,2007-02-04 01:00,hbe4678,hbe4678,2007-04-16 08:00,2007-04-26 17:00,80
325,12456506,14517,6815860,13329,1,0,N,N,N,CP_Units,TT_Task,DT_FixedDUR2,RV_OK,TK_Active,CO03AV1110,03A Paint Fabricated Pipe Spools,,1184,736,80,0,0,0,80,0,0,0,,2006-11-23 00:00,,2007-09-24 08:00,2007-10-21 17:00,,2007-03-29 08:00,2007-04-09 17:00,2007-03-29 08:00,2007-04-09 17:00,2007-01-23 08:00,2007-02-03 17:00,,2007-09-24 08:00,2007-10-21 17:00,,PT_Normal,,,,,orADqWkyT4WrNEQDLN9tgQ,PCBh+Y+Xa0OHV7BASNIHkh,,,N,0,0,,,2007-02-01 02:41,2007-02-01 02:43,hbe4678,hbe4678,2007-03-29 08:00,2007-04-09 17:00,80
326,12456507,14517,6815860,13329,1,0,N,N,N,CP_Units,TT_Task,DT_FixedDUR2,RV_OK,TK_NotStart,CO03AV1120,03A Paint Touch-up - Piping,,464.016666666667,0,80,0,0,0,80,0,0,0,,,,2007-11-07 08:01,2007-11-19 08:01,,2007-08-09 08:00,2007-08-20 17:00,2007-08-09 08:00,2007-08-20 17:00,2007-08-09 08:00,2007-08-20 17:00,,2007-11-07 08:01,2007-11-19 08:01,,PT_Normal,,,,,HLlnTzdSQDyGbte2JQooFQ,cNpN/H5dG0OOreQNpjaQLh,,,N,0,0,,,2007-02-01 02:41,2007-02-04 01:00,hbe4678,hbe4678,2007-08-09 08:00,2007-08-20 17:00,80
327,12456508,14517,6815860,13329,1,0,N,N,N,CP_Units,TT_Task,DT_FixedDUR2,RV_OK,TK_NotStart,CO03AV1130,03A Paint Touch-up - Equipment,,464.016666666667,0,80,0,0,0,80,0,0,0,,,,2007-11-07 08:01,2007-11-19 08:01,,2007-08-09 08:00,2007-08-20 17:00,2007-08-09 08:00,2007-08-20 17:00,2007-08-09 08:00,2007-08-20 17:00,,2007-11-07 08:01,2007-11-19 08:01,,PT_Normal,,,,,F9op7isMR6KNH4w8kk0BIQ,R6eIUY/F70iPOe0Vn4wy3B,,,N,0,0,,,2007-02-01 02:41,2007-02-04 01:00,hbe4678,hbe4678,2007-08-09 08:00,2007-08-20 17:00,80
328,12456509,14517,6815860,13329,1,0,N,N,N,CP_Units,TT_WBS,DT_FixedDUR2,RV_OK,TK_Active,WO030V1100,030 Paint,1340,1224.01666666667,3752,1496,1075.81,14878.1,15953.91,1864,0,0,0,,2006-11-23 00:00,,2007-08-11 08:00,2008-04-12 08:01,,2007-02-12 08:00,2007-09-22 17:00,2007-02-12 08:00,2007-09-22 17:00,2006-12-13 08:00,2007-09-22 17:00,,2007-08-11 08:00,2008-04-12 08:01,,PT_Normal,,,,,FsqWJ3mdSy6swTmtO0+4kg,g2NEszz1qEaU8FBrNBwC7R,,,N,0,0,,,2007-02-01 02:41,2007-02-04 01:05,hbe4678,hbe4678,2007-02-12 08:00,2007-09-22 17:00,1496
329,12456510,14517,6815860,13329,1,0,N,N,N,CP_Units,TT_Task,DT_FixedDUR2,RV_OK,TK_Active,CO03BV1110,03B Paint Fabricated Pipe Spools,,1784.01666666667,680,80,0,0,0,80,0,0,0,,2006-11-23 00:00,,2008-02-17 08:01,2008-02-28 08:01,,2007-05-05 08:00,2007-05-15 17:00,2007-05-05 08:00,2007-05-15 17:00,2007-01-23 08:00,2007-02-03 17:00,,2008-02-17 08:01,2008-02-28 08:01,,PT_Normal,,,,,MnFOBRSdQI+uf41eSQJy1Q,PCBh+Y+Xa0OHV7BASNIHkh,,,N,0,0,,,2007-02-01 02:41,2007-02-04 01:00,hbe4678,hbe4678,2007-05-05 08:00,2007-05-15 17:00,80
330,12456511,14517,6815860,13329,1,0,N,N,N,CP_Units,TT_Task,DT_FixedDUR2,RV_OK,TK_NotStart,CO03BV1120,03B Paint Touch-up - Piping,,1224.01666666667,680,80,0,0,0,80,0,0,0,,,,2008-03-31 08:01,2008-04-12 08:01,,2007-09-06 08:00,2007-09-22 17:00,2007-09-06 08:00,2007-09-22 17:00,2007-09-06 08:00,2007-09-22 17:00,,2008-03-31 08:01,2008-04-12 08:01,,PT_Normal,,,,,DtCWa/sTSiuKV6py0aNgRA,cNpN/H5dG0OOreQNpjaQLh,,,N,0,0,,,2007-02-01 02:41,2007-02-04 01:00,hbe4678,hbe4678,2007-09-06 08:00,2007-09-22 17:00,80
331,12456512,14517,6815860,13329,1,0,N,N,N,CP_Units,TT_Task,DT_FixedDUR2,RV_OK,TK_NotStart,CO03BV1130,03B Paint Touch-up - Equipment,,1984.01666666667,1440,80,0,0,0,80,0,0,0,,,,2008-03-31 08:01,2008-04-12 08:01,,2007-05-19 08:00,2007-05-29 17:00,2007-05-19 08:00,2007-05-29 17:00,2007-05-19 08:00,2007-05-29 17:00,,2008-03-31 08:01,2008-04-12 08:01,,PT_Normal,,,,,CFvg8rUpR2OTHRf3PyUv6A,R6eIUY/F70iPOe0Vn4wy3B,,,N,0,0,,,2007-02-01 02:41,2007-02-04 01:00,hbe4678,hbe4678,2007-05-19 08:00,2007-05-29 17:00,80
332,12456513,14517,6815860,13329,1,0,N,N,N,CP_Units,TT_Task,DT_FixedDUR2,RV_OK,TK_Active,CO03CV1110,03C Paint Fabricated Pipe Spools,,1528,832,80,0,0,0,80,0,0,0,,2006-11-23 00:00,,2007-11-15 08:00,2007-11-26 17:00,,2007-03-15 08:00,2007-03-26 17:00,2007-03-15 08:00,2007-03-26 17:00,2007-01-23 08:00,2007-02-03 17:00,,2007-11-15 08:00,2007-11-26 17:00,,PT_Normal,,,,,cFNwT6MYSRGvj3hdwbfMJQ,CnYd3U9R2kGrBOTtbkMOLB,,,N,0,0,,,2007-02-01 02:41,2007-02-01 02:43,hbe4678,hbe4678,2007-03-15 08:00,2007-03-26 17:00,80
333,12456514,14517,6815860,13329,1,0,N,N,N,CP_Units,TT_Task,DT_FixedDUR2,RV_OK,TK_NotStart,CO03CV1120,03C Paint Touch-up - Piping,,816.016666666667,896,80,0,0,0,80,0,0,0,,,,2008-01-03 08:01,2008-01-15 08:01,,2007-08-09 08:00,2007-08-20 17:00,2007-08-09 08:00,2007-08-20 17:00,2007-08-09 08:00,2007-08-20 17:00,,2008-01-03 08:01,2008-01-15 08:01,,PT_Normal,,,,,bY5gxBA7TqmRwdHJBaHHEg,PExW35JkX0uFIEZYaem/sB,,,N,0,0,,,2007-02-01 02:41,2007-02-04 01:00,hbe4678,hbe4678,2007-08-09 08:00,2007-08-20 17:00,80
334,12456515,14517,6815860,13329,1,0,N,N,N,CP_Units,TT_Task,DT_FixedDUR2,RV_OK,TK_NotStart,CO03CV1130,03C Paint Touch-up - Equipment,,1560,1639.98333333333,80,0,0,0,80,0,0,0,,,,2008-01-03 08:01,2008-01-15 08:01,,2007-04-23 08:01,2007-05-05 08:01,2007-04-23 08:01,2007-05-05 08:01,2007-04-23 08:01,2007-05-05 08:01,,2008-01-03 08:01,2008-01-15 08:01,,PT_Normal,,,,,DXiRyTORTOmvao24j3cx3A,ApCzddlQ+ESMKtqNnJA+6R,,,N,0,0,,,2007-02-01 02:41,2007-02-04 01:00,hbe4678,hbe4678,2007-04-23 08:01,2007-05-05 08:01,80
335,12456516,14517,6815860,13329,1,0,N,N,N,CP_Units,TT_Task,DT_FixedDUR2,RV_OK,TK_Active,CO03DV1110,03D Paint Fabricated Pipe Spools,,1376.01666666667,592,40,0,0,0,40,0,0,0,,2006-11-23 00:00,,2007-11-14 08:01,2007-11-20 08:01,,2007-04-05 08:00,2007-04-10 17:00,2007-04-05 08:00,2007-04-10 17:00,2007-01-29 08:00,2007-02-03 17:00,,2007-11-14 08:01,2007-11-20 08:01,,PT_Normal,,,,,IE3aOMMQRbCmiB2yDFdp4g,zWRqEPtL8EOAK/wftHSP/B,,,N,0,0,,,2007-02-01 02:41,2007-02-04 01:00,hbe4678,hbe4678,2007-04-05 08:00,2007-04-10 17:00,40
336,12456517,14517,6815860,13329,1,0,N,N,N,CP_Units,TT_Task,DT_FixedDUR2,RV_OK,TK_NotStart,CO03DV1120,03D Paint Touch-up - Piping,,888,983.983333333333,40,0,0,0,40,0,0,0,,,,2008-01-09 08:01,2008-01-15 08:01,,2007-08-05 08:01,2007-08-11 08:01,2007-08-05 08:01,2007-08-11 08:01,2007-08-05 08:01,2007-08-11 08:01,,2008-01-09 08:01,2008-01-15 08:01,,PT_Normal,,,,,yrHvvtFPScW1fuqPFtfBEQ,7vKupWEl7EeOkcXNWP6heR,,,N,0,0,,,2007-02-01 02:41,2007-02-04 01:00,hbe4678,hbe4678,2007-08-05 08:01,2007-08-11 08:01,40
337,12456518,14517,6815861,13329,1,0,N,N,N,CP_Units,TT_Task,DT_FixedDUR2,RV_OK,TK_NotStart,CO03FV2110,03F Insulate - Equipment,,1080.01666666667,1096,104,0,0,0,104,0,0,0,,,,2008-01-07 08:01,2008-01-22 08:01,,2007-07-05 08:00,2007-07-19 17:00,2007-07-05 08:00,2007-07-19 17:00,2007-07-05 08:00,2007-07-19 17:00,,2008-01-07 08:01,2008-01-22 08:01,,PT_Normal,,,,,qqIaHCtFSYy5m0MrUjGfnQ,vzEr0ozGTU21Cmom/6IE5B,,,N,0,0,,,2007-02-01 02:41,2007-02-04 01:00,hbe4678,hbe4678,2007-07-05 08:00,2007-07-19 17:00,104
338,12456519,14517,6815861,13329,1,0,N,N,N,CP_Units,TT_Task,DT_FixedDUR2,RV_OK,TK_NotStart,CO03FV2120,03F Insulate - Piping,,704.016666666667,720,104,0,0,0,104,0,0,0,,,,2008-01-07 08:01,2008-01-22 08:01,,2007-08-29 08:00,2007-09-12 17:00,2007-08-29 08:00,2007-09-12 17:00,2007-08-29 08:00,2007-09-12 17:00,,2008-01-07 08:01,2008-01-22 08:01,,PT_Normal,,,,,pnzK4Sm/T0SBwX+Xg8IDeQ,eK6oB4ZlX068TQwVSLObBR,,,N,0,0,,,2007-02-01 02:41,2007-02-04 01:00,hbe4678,hbe4678,2007-08-29 08:00,2007-09-12 17:00,104
339,12456520,14517,6815861,13329,1,0,N,N,N,CP_Units,TT_Task,DT_FixedDUR2,RV_OK,TK_NotStart,CO03AV2110,03A Insulate - Equipment,,464.016666666667,744,104,0,0,0,104,0,0,0,,,,2007-11-19 08:01,2007-12-04 08:01,,2007-08-21 08:00,2007-09-04 17:00,2007-08-21 08:00,2007-09-04 17:00,2007-08-21 08:00,2007-09-04 17:00,,2007-11-19 08:01,2007-12-04 08:01,,PT_Normal,,,,,E79hb5PrTPaB2h2fha5LOA,/MsOoXDF0U6p4cHufmg8aR,,,N,0,0,,,2007-02-01 02:41,2007-02-04 01:00,hbe4678,hbe4678,2007-08-21 08:00,2007-09-04 17:00,104
340,12456521,14517,6815861,13329,1,0,N,N,N,CP_Units,TT_Task,DT_FixedDUR2,RV_OK,TK_NotStart,CO03AV2120,03A Insulate - Piping,,504.016666666667,784,104,0,0,0,104,0,0,0,,,,2007-11-19 08:01,2007-12-04 08:01,,2007-08-15 08:00,2007-08-29 17:00,2007-08-15 08:00,2007-08-29 17:00,2007-08-15 08:00,2007-08-29 17:00,,2007-11-19 08:01,2007-12-04 08:01,,PT_Normal,,,,,Qou1qXN2Qge9hIEAuZ8CcQ,tymwz8ej20u2Z7hZDk+XsR,,,N,0,0,,,2007-02-01 02:41,2007-02-04 01:00,hbe4678,hbe4678,2007-08-15 08:00,2007-08-29 17:00,104
341,12456522,14517,6815861,13329,1,0,N,N,N,CP_Units,TT_WBS,DT_FixedDUR2,RV_OK,TK_NotStart,WO030V2100,030 Insulation,1340,1064.01666666667,3592,672,0,7421.95,7421.95,672,0,0,0,,,,2007-11-19 08:01,2008-04-12 08:01,,2007-07-05 08:00,2007-11-01 17:00,2007-07-05 08:00,2007-11-01 17:00,2007-07-05 08:00,2007-11-01 17:00,,2007-11-19 08:01,2008-04-12 08:01,,PT_Normal,,,,,AHjHji0dSp2u3ZINSxii6g,vaJbI+EqmUq0HyDnC1mB3h,,,N,0,0,,,2007-02-01 02:41,2007-02-04 01:05,hbe4678,hbe4678,2007-07-05 08:00,2007-11-01 17:00,672
342,12456523,14517,6815861,13329,1,0,N,N,N,CP_Units,TT_Task,DT_FixedDUR2,RV_OK,TK_NotStart,CO03EV2110,03E Insulate - Equipment,,464.016666666667,728,176,0,0,0,176,0,0,0,,,,2007-12-15 08:01,2008-01-15 08:01,,2007-09-19 08:00,2007-11-01 17:00,2007-09-19 08:00,2007-11-01 17:00,2007-09-19 08:00,2007-11-01 17:00,,2007-12-15 08:01,2008-01-15 08:01,,PT_Normal,,,,,XWaM9yoxSamtuOPWderCMA,Lh3r2dTXU02CB9hqe7ZGCh,,,N,0,0,,,2007-02-01 02:41,2007-02-04 01:00,hbe4678,hbe4678,2007-09-19 08:00,2007-11-01 17:00,176
343,12456524,14517,6815861,13329,1,0,N,N,N,CP_Units,TT_Task,DT_FixedDUR2,RV_OK,TK_NotStart,CO03EV2120,03E Insulate - Piping,,464.016666666667,728,176,0,0,0,176,0,0,0,,,,2007-12-15 08:01,2008-01-15 08:01,,2007-09-19 08:00,2007-11-01 17:00,2007-09-19 08:00,2007-11-01 17:00,2007-09-19 08:00,2007-11-01 17:00,,2007-12-15 08:01,2008-01-15 08:01,,PT_Normal,,,,,GM1TkyPER/SSTlWWlRrLbA,c9bcne2BFkS+YODaTX6+TB,,,N,0,0,,,2007-02-01 02:41,2007-02-04 01:00,hbe4678,hbe4678,2007-09-19 08:00,2007-11-01 17:00,176
344,12456525,14517,6815861,13329,1,0,N,N,N,CP_Units,TT_Task,DT_FixedDUR2,RV_OK,TK_NotStart,CO03YV2120,03Y Insulate - Piping,,1184.01666666667,856,384,0,0,0,384,0,0,0,,,,2008-02-16 08:01,2008-04-12 08:01,,2007-07-30 08:00,2007-10-03 17:00,2007-07-30 08:00,2007-10-03 17:00,2007-07-30 08:00,2007-10-03 17:00,,2008-02-16 08:01,2008-04-12 08:01,,PT_Normal,,,,,Jbj+lUKdSyOz77kS+Gl6rg,oKku4yuXsE+zU8mOMCOr5x,,,N,0,0,,,2007-02-01 02:41,2007-02-04 01:00,hbe4678,hbe4678,2007-07-30 08:00,2007-10-03 17:00,384
345,12456526,14517,6815864,13329,1,100,N,N,N,CP_Units,TT_Task,DT_FixedDUR2,RV_OK,TK_Complete,CO03BC0110,"03B Form, Pour, Strip Fnds - Major Fnds (N/A)",,,,0,0,0,0,240,0,0,0,,2006-11-16 00:00,2006-11-16 00:00,2007-12-31 08:01,2007-12-31 08:01,,2007-01-27 08:00,2007-01-27 08:00,,,2006-12-26 08:00,2007-02-05 17:00,,,,,PT_Normal,,,,,XG+FV9GGRTiRAwh5skz+CA,bNwnnsy/skCbRiOg1tbp+x,,,N,0,0,,,2007-02-01 02:41,2007-02-04 01:05,hbe4678,hbe4678,,,0
346,12456527,14517,6815864,13329,1,0,N,N,N,CP_Units,TT_Task,DT_FixedDUR2,RV_OK,TK_NotStart,CO03BC0120,"03B Form, Pour, Strip Fnds - Misc Fnds",,1944.01666666667,48,96,0,0,0,96,0,0,0,,,,2008-01-26 08:01,2008-02-09 08:01,,2007-03-20 08:00,2007-04-02 17:00,2007-03-20 08:00,2007-04-02 17:00,2007-03-20 08:00,2007-04-02 17:00,,2008-01-26 08:01,2008-02-09 08:01,,PT_Normal,,,,,p7N44fGCTZiCOvxZDjGhKQ,dJR7XV/UT0aN3Vo/eAsxHh,,,N,0,0,,,2007-02-01 02:41,2007-02-04 01:00,hbe4678,hbe4678,2007-03-20 08:00,2007-04-02 17:00,96
347,12456528,14517,6815864,13329,1,100,N,N,N,CP_Units,TT_Task,DT_FixedDUR2,RV_OK,TK_Complete,CO03CC0110,"03C Form, Pour, Strip Fnds - Major Fnds",,,,0,0,0,0,192,0,0,0,,2006-05-22 00:00,2006-07-13 00:00,2007-10-22 17:00,2007-10-22 17:00,,2007-01-27 00:00,2007-01-27 00:00,,,2006-02-22 08:00,2006-03-21 17:00,,,,,PT_Normal,,,,,+bQgJifLTB2Jy490eiEpqA,3ADreyMqkUC+U/vd6f4N9R,,,N,0,0,,,2007-02-01 02:41,2007-02-04 01:05,hbe4678,hbe4678,,,0
348,12456529,14517,6815864,13329,1,0,N,N,N,CP_Units,TT_Task,DT_FixedDUR2,RV_OK,TK_NotStart,CO03CC0120,"03C Form, Pour, Strip Fnds - Misc Fnds",,1328,64,96,0,0,0,96,0,0,0,,,,2007-10-23 08:00,2007-11-05 17:00,,2007-03-21 08:00,2007-04-03 17:00,2007-03-21 08:00,2007-04-03 17:00,2007-03-21 08:00,2007-04-03 17:00,,2007-10-23 08:00,2007-11-05 17:00,,PT_Normal,,,,,tJONHJSQSaCtFBWZkvcq+w,mqCpz4mL00iQte/DFIzUAR,,,N,0,0,,,2007-02-01 02:41,2007-02-01 02:43,hbe4678,hbe4678,2007-03-21 08:00,2007-04-03 17:00,96
349,12456530,14517,6815864,13329,1,100,N,N,N,CP_Units,TT_Task,DT_FixedDUR2,RV_OK,TK_Complete,CO03DC0110,"03D Form, Pour, Strip Fnds - 2002-F (Demin Water Tank)",,,,0,0,0,0,240,0,0,0,,2006-05-07 00:00,2006-05-31 17:00,2007-05-29 08:01,2007-05-29 08:01,,2007-01-27 00:00,2007-01-27 00:00,,,2006-05-13 08:00,2006-06-15 17:00,,,,,PT_Normal,,,,,uPewU+QHRe+GBH5FuOqO/Q,Le83XSdEnUiubQqn8u6V7R,,,N,0,0,,,2007-02-01 02:41,2007-02-04 01:05,hbe4678,hbe4678,,,0
350,12456531,14517,6815864,13329,1,0,N,N,N,CP_Units,TT_Task,DT_FixedDUR2,RV_OK,TK_NotStart,CO03DC0120,"03D Form, Pour, Strip Fnds - Misc Fnds",,1592.01666666667,80,96,0,0,0,96,0,0,0,,,,2007-10-08 08:01,2007-10-31 08:01,,2007-02-05 08:00,2007-02-18 17:00,2007-02-05 08:00,2007-02-18 17:00,2007-02-05 08:00,2007-02-18 17:00,,2007-10-08 08:01,2007-10-31 08:01,,PT_Normal,,,,,ktSZK6svSlWBIKr+JIbsjQ,33Pwc/h3i02YiNEZms5HnB,,,N,0,0,,,2007-02-01 02:41,2007-02-04 01:00,hbe4678,hbe4678,2007-02-05 08:00,2007-02-18 17:00,96
351,12456532,14517,6815864,13329,1,100,N,N,N,CP_Units,TT_Task,DT_FixedDUR2,RV_OK,TK_Complete,CO03DC0150,"03D Form, Pour, Strip Fnd - 2002J/JA (Fresh Cooling Water Pumps)",,,,0,0,0,0,240,0,0,0,,2006-07-27 00:00,2006-10-10 00:00,2007-10-31 08:01,2007-10-31 08:01,,2007-01-27 00:00,2007-01-27 00:00,,,2006-08-02 08:00,2006-09-05 17:00,,,,,PT_Normal,,,,,WfphmA4vQhekgElntA2b/Q,hrG1BRpp10Sy93znlWCQUh,,,N,0,0,,,2007-02-01 02:41,2007-02-04 01:05,hbe4678,hbe4678,,,0
352,12456533,14517,6815864,13329,1,0,N,N,N,CP_Units,TT_Task,DT_FixedDUR2,RV_OK,TK_NotStart,CO03EC0110,"03E Form, Pour, Strip Fnds - 2001-U Water Treatment",,1008,40,384,0,0,0,384,0,0,0,,,,2007-06-23 08:00,2007-08-16 17:00,,2007-01-27 08:00,2007-03-22 17:00,2007-01-27 08:00,2007-03-22 17:00,2007-01-27 08:00,2007-03-22 17:00,,2007-06-23 08:00,2007-08-16 17:00,,PT_Normal,,,,,GrwrV5XAQiaHRm42RCEETA,MjgyTTVJYUOFyQeX+LBKrB,,,N,0,0,,,2007-02-01 02:41,2007-02-01 02:43,hbe4678,hbe4678,2007-01-27 08:00,2007-03-22 17:00,384
353,12456534,14517,6815864,13329,1,0,N,N,N,CP_Units,TT_Task,DT_FixedDUR2,RV_OK,TK_NotStart,CO03EC0120,"03E Form, Pour, Strip Fnds - Misc Fnds",,968,104,144,0,0,0,144,0,0,0,,,,2007-08-18 08:00,2007-09-06 17:00,,2007-03-29 08:00,2007-04-18 17:00,2007-03-29 08:00,2007-04-18 17:00,2007-03-29 08:00,2007-04-18 17:00,,2007-08-18 08:00,2007-09-06 17:00,,PT_Normal,,,,,/bt9FBzrSBGsTUxuqbySfA,ZgbHu+CXeka8YufryaDmPh,,,N,0,0,,,2007-02-01 02:41,2007-02-01 02:43,hbe4678,hbe4678,2007-03-29 08:00,2007-04-18 17:00,144
354,12456535,14517,6815864,13329,1,0,N,N,N,CP_Units,TT_Task,DT_FixedDUR2,RV_OK,TK_Active,CO03YC0110,"03Y Form, Pour, Strip Fnds - Sleeper Fnds",,784,0,40,0,0,0,624,0,0,0,,2006-11-02 00:00,,2007-05-21 08:00,2007-05-26 17:00,2007-01-31 17:00,2007-01-27 08:00,2007-01-31 17:00,2007-01-27 08:00,2007-01-31 17:00,2006-11-23 08:00,2007-02-28 17:00,,2007-05-21 08:00,2007-05-26 17:00,,PT_Normal,,,,,q6Qwci71QCOWU/kNav40pQ,lTccLprVLEejk5UZ6admrB,,,N,0,0,,,2007-02-01 02:41,2007-02-01 02:43,hbe4678,hbe4678,2007-01-27 08:00,2007-01-31 17:00,40
355,12456536,14517,6815864,13329,1,0,N,N,N,CP_Units,TT_Task,DT_FixedDUR2,RV_OK,TK_Active,CO03BC0140,"03B Form, Pour, Strip Fnds - 2401-A Wastewater Sump",,2128.01666666667,0,24,0,0,0,144,0,0,0,,2006-11-19 00:00,,2007-12-31 08:01,2008-01-03 08:01,2007-01-29 17:00,2007-01-27 08:00,2007-01-29 17:00,2007-01-27 08:00,2007-01-29 17:00,2006-12-05 08:00,2006-12-25 17:00,,2007-12-31 08:01,2008-01-03 08:01,,PT_Normal,,,,,56t1h57XT9SkYejgIi/n3A,hfQS6SMg706tf/i+6RHKhR,,,N,0,0,,,2007-02-01 02:41,2007-02-04 01:00,hbe4678,hbe4678,2007-01-27 08:00,2007-01-29 17:00,24
356,12456537,14517,6815864,13329,1,100,N,N,N,CP_Units,TT_Task,DT_FixedDUR2,RV_OK,TK_Complete,CO03YC0120,"03Y Form, Pour, Strip Fnds - Pipe Rack Fnds",,,,0,0,0,0,192,0,0,0,,2006-12-18 00:00,2007-01-25 00:00,2007-05-21 08:00,2007-05-21 08:00,,2007-01-27 08:00,2007-01-27 08:00,,,2007-01-06 08:00,2007-02-01 17:00,,,,,PT_Normal,,,,,XoNGFMEjRP+Ny7BZk8NwbQ,FDifthw7uUKW1yUBOlWFvh,,,N,0,0,,,2007-02-01 02:41,2007-02-04 01:05,hbe4678,hbe4678,,,0
357,12456538,14517,6815864,13329,1,100,N,N,N,CP_Units,TT_Task,DT_FixedDUR2,RV_OK,TK_Complete,CO03FC0110,"03F Form, Pour, Strip Fnds - Package Boiler",,,,0,0,0,0,480,0,0,0,,2006-08-07 08:00,2006-10-29 00:00,2007-07-31 08:01,2007-07-31 08:01,,2007-01-27 00:00,2007-01-27 00:00,,,2006-08-07 08:00,2006-11-05 17:00,,,,,PT_Normal,,,,,bAhn24uUTpugquQGNRgpFw,3WywyZ1bfU+PVpDC7mKXTB,,,N,0,0,,,2007-02-01 02:41,2007-02-04 01:05,hbe4678,hbe4678,,,0
358,12456539,14517,6815864,13329,1,0,N,N,N,CP_Units,TT_Task,DT_FixedDUR2,RV_OK,TK_Active,CO03FC0120,"03F Form, Pour, Strip Fnds - Misc Fnds",,1240.01666666667,64,144,0,0,0,144,0,0,0,,2006-12-02 00:00,,2007-09-24 08:01,2007-10-31 08:01,,2007-03-21 08:00,2007-04-10 17:00,2007-03-21 08:00,2007-04-10 17:00,2007-03-01 08:00,2007-03-21 17:00,,2007-09-24 08:01,2007-10-31 08:01,,PT_Normal,,,,,RGU40JTsT2GcnpdOA/6Zxg,62hzkcTrb0Wc7ox1uGgfQx,,,N,0,0,,,2007-02-01 02:41,2007-02-04 01:00,hbe4678,hbe4678,2007-03-21 08:00,2007-04-10 17:00,144
359,12456540,14517,6815864,13329,1,0,N,N,N,CP_Units,TT_Task,DT_FixedDUR2,RV_OK,TK_Active,CO03AC0110,"03A Form, Pour, Strip Fnds - Major Fnds Gen'l",,1240,0,144,0,0,0,240,0,0,0,,2006-11-04 00:00,,2007-07-26 08:00,2007-08-15 17:00,2007-02-15 17:00,2007-01-27 08:00,2007-02-15 17:00,2007-01-27 08:00,2007-02-15 17:00,2006-11-18 08:00,2006-12-21 17:00,,2007-07-26 08:00,2007-08-15 17:00,,PT_Normal,,,,,98MyK0HeTwuMnlKLJrYEPg,bNwnnsy/skCbRiOg1tbp+x,,,N,0,0,,,2007-02-01 02:41,2007-02-01 02:43,hbe4678,hbe4678,2007-01-27 08:00,2007-02-15 17:00,144
360,12456541,14517,6815864,13329,1,0,N,N,N,CP_Units,TT_Task,DT_FixedDUR2,RV_OK,TK_NotStart,CO03AC0120,"03A Form, Pour, Strip Fnds - Misc Fnds",,1128,64,96,0,0,0,96,0,0,0,,,,2007-08-26 08:00,2007-09-08 17:00,,2007-03-14 08:00,2007-03-27 17:00,2007-03-14 08:00,2007-03-27 17:00,2007-03-14 08:00,2007-03-27 17:00,,2007-08-26 08:00,2007-09-08 17:00,,PT_Normal,,,,,1UuOIGyCQcGpRnX1wcxGFw,dJR7XV/UT0aN3Vo/eAsxHh,,,N,0,0,,,2007-02-01 02:41,2007-02-01 02:43,hbe4678,hbe4678,2007-03-14 08:00,2007-03-27 17:00,96
361,12456542,14517,6815864,13329,1,0,N,N,N,CP_Units,TT_WBS,DT_FixedDUR2,RV_OK,TK_Active,WO030C0100,030 Concrete & Excavation,1355,1832.01666666667,4792,568,34973.61,24928.18,59901.79,2696,0,0,0,,2006-05-07 00:00,,2007-05-21 08:00,2008-02-09 08:01,,2007-01-27 08:00,2007-04-18 17:00,2007-01-27 08:00,2007-04-18 17:00,2006-02-22 08:00,2007-04-18 17:00,,2007-05-21 08:00,2008-02-09 08:01,,PT_Normal,,,,,yn5RIGO1TTGc33Ap0gFM1Q,eNSAlav1Zk2X7xMXyJuzex,,,N,0,0,,,2007-02-01 02:41,2007-02-04 01:05,hbe4678,hbe4678,2007-01-27 08:00,2007-04-18 17:00,568
362,12456543,14517,6815869,13329,1,0,N,N,N,CP_Units,TT_Task,DT_FixedDUR2,RV_OK,TK_NotStart,CO03AE0110,"03A Lighting JB's, Stands, Tray & Cable",,600.016666666667,0,144,0,0,0,144,0,0,0,,,,2007-11-06 08:01,2007-11-27 08:01,,2007-07-19 08:00,2007-08-08 17:00,2007-07-19 08:00,2007-08-08 17:00,2007-07-19 08:00,2007-08-08 17:00,,2007-11-06 08:01,2007-11-27 08:01,,PT_Normal,,,,,jKVIFxnaTKyG9zU8QeOukw,idcJm+V9I0OL/gjDITOQLR,,,N,0,0,,,2007-02-01 02:41,2007-02-04 01:00,hbe4678,hbe4678,2007-07-19 08:00,2007-08-08 17:00,144
363,12456544,14517,6815869,13329,1,0,N,N,N,CP_Units,TT_Task,DT_FixedDUR2,RV_OK,TK_NotStart,CO03AE0120,03A Lighting Fixture Installation/Termination,,600.016666666667,280,48,0,0,0,48,0,0,0,,,,2007-11-27 08:01,2007-12-04 08:01,,2007-08-09 08:00,2007-08-15 17:00,2007-08-09 08:00,2007-08-15 17:00,2007-08-09 08:00,2007-08-15 17:00,,2007-11-27 08:01,2007-12-04 08:01,,PT_Normal,,,,,Zj8ErZcGSiSHUUcjsbJ/kw,g1/mJoW5KUWaztom4iCB7h,,,N,0,0,,,2007-02-01 02:41,2007-02-04 01:00,hbe4678,hbe4678,2007-08-09 08:00,2007-08-15 17:00,48
364,12456545,14517,6815869,13329,1,0,N,N,N,CP_Units,TT_Task,DT_FixedDUR2,RV_OK,TK_NotStart,CO03AE0130,"03A Power/Control JB's, Tray, Cable, Termination",,448,0,272,0,0,0,272,0,0,0,,,,2007-09-19 08:00,2007-11-15 17:00,,2007-07-12 08:00,2007-08-20 17:00,2007-07-12 08:00,2007-08-20 17:00,2007-07-12 08:00,2007-08-20 17:00,,2007-09-19 08:00,2007-11-15 17:00,,PT_Normal,,,,,c6IGx7fLQ8+Q98c+w9BAug,a2o8j4sv+kOcBvEO/Nl4hR,,,N,0,0,,,2007-02-01 02:41,2007-02-01 02:43,hbe4678,hbe4678,2007-07-12 08:00,2007-08-20 17:00,272
365,12456546,14517,6815869,13329,1,0,N,N,N,CP_Units,TT_WBS,DT_FixedDUR2,RV_OK,TK_NotStart,WO030E0100,030 Above Ground Electrical,1343,1224.01666666667,3752,648,0,35377.08,35377.08,648,0,0,0,,,,2007-07-23 08:00,2008-04-12 08:01,,2007-06-16 08:00,2007-09-22 17:00,2007-06-16 08:00,2007-09-22 17:00,2007-06-16 08:00,2007-09-22 17:00,,2007-07-23 08:00,2008-04-12 08:01,,PT_Normal,,,,,Y5/1A22bT6qr69hu9S7gnw,TLfFi1kmhUOZ2kp2WYLkkh,,,N,0,0,,,2007-02-01 02:41,2007-02-04 01:05,hbe4678,hbe4678,2007-06-16 08:00,2007-09-22 17:00,648
366,12456547,14517,6815869,13329,1,0,N,N,N,CP_Units,TT_Task,DT_FixedDUR2,RV_OK,TK_NotStart,CO03BE0110,"03B Lighting JB's, Stands, Tray & Cable",,1496.01666666667,0,144,0,0,0,144,0,0,0,,,,2008-03-15 08:01,2008-04-05 08:01,,2007-07-12 08:00,2007-08-01 17:00,2007-07-12 08:00,2007-08-01 17:00,2007-07-12 08:00,2007-08-01 17:00,,2008-03-15 08:01,2008-04-05 08:01,,PT_Normal,,,,,18JZ5y5BTaKRyhtuDYqJjA,idcJm+V9I0OL/gjDITOQLR,,,N,0,0,,,2007-02-01 02:41,2007-02-04 01:00,hbe4678,hbe4678,2007-07-12 08:00,2007-08-01 17:00,144
367,12456548,14517,6815869,13329,1,0,N,N,N,CP_Units,TT_Task,DT_FixedDUR2,RV_OK,TK_NotStart,CO03BE0120,03B Lighting Fixture Installation/Termination,,1496.01666666667,328,48,0,0,0,48,0,0,0,,,,2008-04-05 08:01,2008-04-12 08:01,,2007-08-02 08:00,2007-08-08 17:00,2007-08-02 08:00,2007-08-08 17:00,2007-08-02 08:00,2007-08-08 17:00,,2008-04-05 08:01,2008-04-12 08:01,,PT_Normal,,,,,sNtQ0hAtQfalNi897halzg,g1/mJoW5KUWaztom4iCB7h,,,N,0,0,,,2007-02-01 02:41,2007-02-04 01:00,hbe4678,hbe4678,2007-08-02 08:00,2007-08-08 17:00,48
368,12456549,14517,6815869,13329,1,0,N,N,N,CP_Units,TT_Task,DT_FixedDUR2,RV_OK,TK_NotStart,CO03BE0130,"03B Power/Control JB's, Tray, Cable, Termination",,1104.01666666667,0,264,0,0,0,264,0,0,0,,,,2008-02-16 08:01,2008-03-25 08:01,,2007-08-11 08:00,2007-09-22 17:00,2007-08-11 08:00,2007-09-22 17:00,2007-08-11 08:00,2007-09-22 17:00,,2008-02-16 08:01,2008-03-25 08:01,,PT_Normal,,,,,ED7r7YNySKSIwcy8fu8/Sg,a2o8j4sv+kOcBvEO/Nl4hR,,,N,0,0,,,2007-02-01 02:41,2007-02-04 01:00,hbe4678,hbe4678,2007-08-11 08:00,2007-09-22 17:00,264
369,12456550,14517,6815869,13329,1,0,N,N,N,CP_Units,TT_Task,DT_FixedDUR2,RV_OK,TK_NotStart,CO03CE0110,"03C Lighting JB's, Stands, Tray & Cable",,984.016666666667,0,192,0,0,0,192,0,0,0,,,,2007-11-28 08:01,2008-01-01 08:01,,2007-06-16 08:00,2007-07-12 17:00,2007-06-16 08:00,2007-07-12 17:00,2007-06-16 08:00,2007-07-12 17:00,,2007-11-28 08:01,2008-01-01 08:01,,PT_Normal,,,,,YKPqv7s+Qy+1P9ECMbU+nQ,dBkt07QbKUq9WlMC5FSCjR,,,N,0,0,,,2007-02-01 02:41,2007-02-04 01:00,hbe4678,hbe4678,2007-06-16 08:00,2007-07-12 17:00,192
370,12456551,14517,6815869,13329,1,0,N,N,N,CP_Units,TT_Task,DT_FixedDUR2,RV_OK,TK_NotStart,CO03CE0120,03C Lighting Fixture Installation/Termination,,984.016666666667,416,96,0,0,0,96,0,0,0,,,,2008-01-01 08:01,2008-01-15 08:01,,2007-07-14 08:00,2007-07-26 17:00,2007-07-14 08:00,2007-07-26 17:00,2007-07-14 08:00,2007-07-26 17:00,,2008-01-01 08:01,2008-01-15 08:01,,PT_Normal,,,,,IVBlvNFBQtqU1hf4IBx6CA,u2EwgbgIME67izBRoHUbTh,,,N,0,0,,,2007-02-01 02:41,2007-02-04 01:00,hbe4678,hbe4678,2007-07-14 08:00,2007-07-26 17:00,96
371,12456552,14517,6815869,13329,1,0,N,N,N,CP_Units,TT_Task,DT_FixedDUR2,RV_OK,TK_NotStart,CO03CE0130,"03C Power/Control JB's, Tray, Cable, Termination",,696,0,272,0,0,0,272,0,0,0,,,,2007-11-13 08:00,2007-12-27 17:00,,2007-07-12 08:00,2007-08-20 17:00,2007-07-12 08:00,2007-08-20 17:00,2007-07-12 08:00,2007-08-20 17:00,,2007-11-13 08:00,2007-12-27 17:00,,PT_Normal,,,,,TW/G4YmzRU24YBFbuT9sOA,DZM5vGgdaESlBIbC7BnUSh,,,N,0,0,,,2007-02-01 02:41,2007-02-01 02:43,hbe4678,hbe4678,2007-07-12 08:00,2007-08-20 17:00,272
372,12456553,14517,6815869,13329,1,0,N,N,N,CP_Units,TT_Task,DT_FixedDUR2,RV_OK,TK_NotStart,CO03DE0110,"03D Lighting JB's, Stands, Tray & Cable",,840.016666666667,0,288,0,0,0,288,0,0,0,,,,2007-11-07 08:01,2007-12-25 08:01,,2007-06-16 08:00,2007-07-26 17:00,2007-06-16 08:00,2007-07-26 17:00,2007-06-16 08:00,2007-07-26 17:00,,2007-11-07 08:01,2007-12-25 08:01,,PT_Normal,,,,,wwbTMN2ETPG9NWQkSsjT/A,osPMuL+m/UOmIgFmpYVnjx,,,N,0,0,,,2007-02-01 02:41,2007-02-04 01:00,hbe4678,hbe4678,2007-06-16 08:00,2007-07-26 17:00,288
373,12456554,14517,6815869,13329,1,0,N,N,N,CP_Units,TT_Task,DT_FixedDUR2,RV_OK,TK_NotStart,CO03DE0120,03D Lighting Fixture Installation/Termination,,840.016666666667,272,144,0,0,0,144,0,0,0,,,,2007-12-25 08:01,2008-01-15 08:01,,2007-07-28 08:00,2007-08-16 17:00,2007-07-28 08:00,2007-08-16 17:00,2007-07-28 08:00,2007-08-16 17:00,,2007-12-25 08:01,2008-01-15 08:01,,PT_Normal,,,,,NT5hiiJmTqG5CeSG34vnYA,edyS8B3V1U2kpQkkzPoukx,,,N,0,0,,,2007-02-01 02:41,2007-02-04 01:00,hbe4678,hbe4678,2007-07-28 08:00,2007-08-16 17:00,144
374,12456555,14517,6815869,13329,1,0,N,N,N,CP_Units,TT_Task,DT_FixedDUR2,RV_OK,TK_NotStart,CO03DE0130,"03D Power/Control JB's, Tray, Cable, Termination",,1048.01666666667,248.016666666667,136,0,0,0,136,0,0,0,,,,2007-12-08 08:01,2008-01-02 08:01,,2007-06-16 08:00,2007-07-04 17:00,2007-06-16 08:00,2007-07-04 17:00,2007-06-16 08:00,2007-07-04 17:00,,2007-12-08 08:01,2008-01-02 08:01,,PT_Normal,,,,,+qGBQEgHTDKp4JnXTuO8ZQ,4pxGbr7Av0+dEWv7C+b6GB,,,N,0,0,,,2007-02-01 02:41,2007-02-04 01:00,hbe4678,hbe4678,2007-06-16 08:00,2007-07-04 17:00,136
375,12456556,14517,6815869,13329,1,0,N,N,N,CP_Units,TT_Task,DT_FixedDUR2,RV_OK,TK_NotStart,CO03EE0110,"03E Lighting JB's, Stands, Tray & Cable",,840.016666666667,0,288,0,0,0,288,0,0,0,,,,2007-11-07 08:01,2007-12-25 08:01,,2007-06-16 08:00,2007-07-26 17:00,2007-06-16 08:00,2007-07-26 17:00,2007-06-16 08:00,2007-07-26 17:00,,2007-11-07 08:01,2007-12-25 08:01,,PT_Normal,,,,,sw/okMYDQXGKwb+NVOMeZQ,pDvXTYRSzEa753GXCHEUsB,,,N,0,0,,,2007-02-01 02:41,2007-02-04 01:00,hbe4678,hbe4678,2007-06-16 08:00,2007-07-26 17:00,288
376,12456557,14517,6815869,13329,1,0,N,N,N,CP_Units,TT_Task,DT_FixedDUR2,RV_OK,TK_NotStart,CO03EE0120,03E Lighting Fixture Installation/Termination,,840.016666666667,272,144,0,0,0,144,0,0,0,,,,2007-12-25 08:01,2008-01-15 08:01,,2007-07-28 08:00,2007-08-16 17:00,2007-07-28 08:00,2007-08-16 17:00,2007-07-28 08:00,2007-08-16 17:00,,2007-12-25 08:01,2008-01-15 08:01,,PT_Normal,,,,,nQRydMTRQJyRmyAU6ZmELw,fNRkAY5fU0KfLi9oL/KcYB,,,N,0,0,,,2007-02-01 02:41,2007-02-04 01:00,hbe4678,hbe4678,2007-07-28 08:00,2007-08-16 17:00,144
377,12456558,14517,6815869,13329,1,0,N,N,N,CP_Units,TT_Task,DT_FixedDUR2,RV_OK,TK_NotStart,CO03EE0130,"03E Power/Control JB's, Tray, Cable, Termination",,488,0,432,0,0,0,432,0,0,0,,,,2007-10-01 08:00,2007-12-15 17:00,,2007-07-12 08:00,2007-09-12 17:00,2007-07-12 08:00,2007-09-12 17:00,2007-07-12 08:00,2007-09-12 17:00,,2007-10-01 08:00,2007-12-15 17:00,,PT_Normal,,,,,h+ZIvcRDTHKHOKARIjpVhQ,fQWoiwK6u0CfVgq7bwRi9R,,,N,0,0,,,2007-02-01 02:41,2007-02-01 02:43,hbe4678,hbe4678,2007-07-12 08:00,2007-09-12 17:00,432
378,12456559,14517,6815869,13329,1,0,N,N,N,CP_Units,TT_Task,DT_FixedDUR2,RV_OK,TK_NotStart,CO03YE0110,"03Y Lighting JB's, Stands, Tray & Cable",,1296.01666666667,920,576,0,0,0,576,0,0,0,,,,2008-01-19 08:01,2008-04-12 08:01,,2007-06-16 08:00,2007-09-06 17:00,2007-06-16 08:00,2007-09-06 17:00,2007-06-16 08:00,2007-09-06 17:00,,2008-01-19 08:01,2008-04-12 08:01,,PT_Normal,,,,,w8I7yG8NRJexqYWYLEejgA,GD8P8RoX2UWOGlr9Rbmd4B,,,N,0,0,,,2007-02-01 02:41,2007-02-04 01:00,hbe4678,hbe4678,2007-06-16 08:00,2007-09-06 17:00,576
379,12456560,14517,6815869,13329,1,0,N,N,N,CP_Units,TT_Task,DT_FixedDUR2,RV_OK,TK_NotStart,CO03YE0130,"03Y Power/Control JB's, Tray, Cable, Termination",,256,0,576,0,0,0,576,0,0,0,,,,2007-07-23 08:00,2007-11-05 17:00,,2007-06-16 08:00,2007-09-06 17:00,2007-06-16 08:00,2007-09-06 17:00,2007-06-16 08:00,2007-09-06 17:00,,2007-07-23 08:00,2007-11-05 17:00,,PT_Normal,,,,,w90U0XTMQ2GJqi37vlzD5w,e6rJidSUNk+dWZ4FsySSkx,,,N,0,0,,,2007-02-01 02:41,2007-02-01 02:43,hbe4678,hbe4678,2007-06-16 08:00,2007-09-06 17:00,576
380,12456561,14517,6815869,13329,1,0,N,N,N,CP_Units,TT_Task,DT_FixedDUR2,RV_OK,TK_NotStart,CO03FE0110,"03F Lighting JB's, Stands, Tray & Cable",,888.016666666667,0,288,0,0,0,288,0,0,0,,,,2007-11-14 08:01,2008-01-01 08:01,,2007-06-16 08:00,2007-07-26 17:00,2007-06-16 08:00,2007-07-26 17:00,2007-06-16 08:00,2007-07-26 17:00,,2007-11-14 08:01,2008-01-01 08:01,,PT_Normal,,,,,QSRy02RFSbezFRvL2Pgbjw,Q6J69cZqiUuWZtXd0pObNh,,,N,0,0,,,2007-02-01 02:41,2007-02-04 01:00,hbe4678,hbe4678,2007-06-16 08:00,2007-07-26 17:00,288
381,12456562,14517,6815869,13329,1,0,N,N,N,CP_Units,TT_Task,DT_FixedDUR2,RV_OK,TK_NotStart,CO03FE0120,03F Lighting Fixture Installation/Termination,,888.016666666667,272,144,0,0,0,144,0,0,0,,,,2008-01-01 08:01,2008-01-22 08:01,,2007-07-28 08:00,2007-08-16 17:00,2007-07-28 08:00,2007-08-16 17:00,2007-07-28 08:00,2007-08-16 17:00,,2008-01-01 08:01,2008-01-22 08:01,,PT_Normal,,,,,bdxKnU0HTAiS9Fy9FlZjYQ,jkhMpJI/r06e9Hlu32iRKx,,,N,0,0,,,2007-02-01 02:41,2007-02-04 01:00,hbe4678,hbe4678,2007-07-28 08:00,2007-08-16 17:00,144
382,12456563,14517,6815869,13329,1,0,N,N,N,CP_Units,TT_Task,DT_FixedDUR2,RV_OK,TK_NotStart,CO03FE0130,"03F Power/Control JB's, Tray, Cable, Termination",,776,0,272,0,0,0,272,0,0,0,,,,2007-11-20 08:00,2008-01-03 17:00,,2007-07-08 08:00,2007-08-15 17:00,2007-07-08 08:00,2007-08-15 17:00,2007-07-08 08:00,2007-08-15 17:00,,2007-11-20 08:00,2008-01-03 17:00,,PT_Normal,,,,,hUR+71ZEQxqqYBEWTV/4WA,epXDyh8NR02a1eQaNfwHyR,,,N,0,0,,,2007-02-01 02:41,2007-02-01 02:43,hbe4678,hbe4678,2007-07-08 08:00,2007-08-15 17:00,272
383,12456564,14517,6815870,13329,1,0,N,N,N,CP_Units,TT_Task,DT_FixedDUR2,RV_OK,TK_NotStart,CO03EI0140,03E Continuity Testing,,-256,0,40,0,0,0,40,0,0,0,,,,2007-12-17 08:00,2007-12-27 17:00,,2008-01-29 08:00,2008-02-03 17:00,2008-01-29 08:00,2008-02-03 17:00,2008-01-29 08:00,2008-02-03 17:00,,2007-12-17 08:00,2007-12-27 17:00,,PT_Normal,,,,,Y7e67GbNS3+/q0CKx4wsWQ,eJALeVn0o0qownvqzjLT+h,,,N,0,0,,,2007-02-01 02:41,2007-02-01 02:43,hbe4678,hbe4678,2008-01-29 08:00,2008-02-03 17:00,40
384,12456565,14517,6815945,13332,1,0,N,N,N,CP_Units,TT_Task,DT_FixedDUR2,RV_OK,TK_NotStart,SC03EI0150,03E Function Testing,,-303.983333333333,0,144,0,0,0,144,0,0,0,,,,2007-12-28 08:01,2008-01-15 08:01,,2008-02-04 08:00,2008-02-21 17:00,2008-02-04 08:00,2008-02-21 17:00,2008-02-04 08:00,2008-02-21 17:00,,2007-12-28 08:01,2008-01-15 08:01,,PT_Normal,,,,,9oTfOVXtQR2z83IRLYlDfg,dW4TN/8LWEyZR6MxBxsQYB,,,N,0,0,,,2007-02-01 02:41,2007-02-04 01:00,hbe4678,hbe4678,2008-02-04 08:00,2008-02-21 17:00,144
385,12456566,14517,6815870,13329,1,0,N,N,N,CP_Units,TT_Task,DT_FixedDUR2,RV_OK,TK_NotStart,CO03YI0120,"03Y Instrument JB's, Field Instr, Tray, Cable",,256,536,576,0,0,0,576,0,0,0,,,,2007-07-23 08:00,2007-11-05 17:00,,2007-06-16 08:00,2007-09-06 17:00,2007-06-16 08:00,2007-09-06 17:00,2007-06-16 08:00,2007-09-06 17:00,,2007-07-23 08:00,2007-11-05 17:00,,PT_Normal,,,,,csBSgax+SaCEfGRC1jKdWw,AoVDNaDAfk2/Pl6dKa6LyB,,,N,0,0,,,2007-02-01 02:41,2007-02-01 02:43,hbe4678,hbe4678,2007-06-16 08:00,2007-09-06 17:00,576
386,12456567,14517,6815870,13329,1,0,N,N,N,CP_Units,TT_Task,DT_FixedDUR2,RV_OK,TK_NotStart,CO03YI0130,03Y Install In Line Instruments,,1112.01666666667,784,192,0,0,0,192,0,0,0,,,,2008-03-01 08:01,2008-03-29 08:01,,2007-08-23 08:00,2007-09-26 17:00,2007-08-23 08:00,2007-09-26 17:00,2007-08-23 08:00,2007-09-26 17:00,,2008-03-01 08:01,2008-03-29 08:01,,PT_Normal,,,,,Sj+Nm4sdTxenaJSIzFu2WQ,XhWwGvcYNEKl1y1ySVy/7h,,,N,0,0,,,2007-02-01 02:41,2007-02-04 01:00,hbe4678,hbe4678,2007-08-23 08:00,2007-09-26 17:00,192
387,12456568,14517,6815870,13329,1,0,N,N,N,CP_Units,TT_Task,DT_FixedDUR2,RV_OK,TK_NotStart,CO03YI0140,03Y Continuity Testing,,328.016666666667,0,288,0,0,0,288,0,0,0,,,,2008-02-23 08:01,2008-04-05 08:01,,2008-01-06 08:00,2008-02-16 17:00,2008-01-06 08:00,2008-02-16 17:00,2008-01-06 08:00,2008-02-16 17:00,,2008-02-23 08:01,2008-04-05 08:01,,PT_Normal,,,,,Q2M7z5cERNWdw+E8H0URFg,tWCD0ACOTUu2fByh3mF97h,,,N,0,0,,,2007-02-01 02:41,2007-02-04 01:00,hbe4678,hbe4678,2008-01-06 08:00,2008-02-16 17:00,288
388,12456569,14517,6815945,13332,1,0,N,N,N,CP_Units,TT_Task,DT_FixedDUR2,RV_OK,TK_NotStart,SC03YI0150,03Y Function Testing,,384.016666666667,0,192,0,0,0,192,0,0,0,,,,2008-03-19 08:01,2008-04-12 08:01,,2008-01-31 08:00,2008-02-23 17:00,2008-01-31 08:00,2008-02-23 17:00,2008-01-31 08:00,2008-02-23 17:00,,2008-03-19 08:01,2008-04-12 08:01,,PT_Normal,,,,,lU26v18MRKuNLvnGJ+GS3w,JQcMs0GjtESUtNPwVgpU4R,,,N,0,0,,,2007-02-01 02:41,2007-02-04 01:00,hbe4678,hbe4678,2008-01-31 08:00,2008-02-23 17:00,192
389,12456570,14517,6815870,13329,1,0,N,N,N,CP_Units,TT_Task,DT_FixedDUR2,RV_OK,TK_NotStart,CO03FI0120,"03F Instrument JB's, Field Instr, Tray, Cable",,776,784,272,0,0,0,272,0,0,0,,,,2007-11-20 08:00,2008-01-03 17:00,,2007-07-08 08:00,2007-08-15 17:00,2007-07-08 08:00,2007-08-15 17:00,2007-07-08 08:00,2007-08-15 17:00,,2007-11-20 08:00,2008-01-03 17:00,,PT_Normal,,,,,OQ6PlnpdS2iz8rJGlp4Ciw,YN3Ne5R02E+c+4swmJukeB,,,N,0,0,,,2007-02-01 02:41,2007-02-01 02:43,hbe4678,hbe4678,2007-07-08 08:00,2007-08-15 17:00,272
390,12456571,14517,6815870,13329,1,0,N,N,N,CP_Units,TT_Task,DT_FixedDUR2,RV_OK,TK_NotStart,CO03FI0130,03F Install In Line Instruments,,776.016666666667,792,24,0,0,0,24,0,0,0,,,,2008-01-05 08:01,2008-01-08 08:01,,2007-08-16 08:00,2007-08-19 17:00,2007-08-16 08:00,2007-08-19 17:00,2007-08-16 08:00,2007-08-19 17:00,,2008-01-05 08:01,2008-01-08 08:01,,PT_Normal,,,,,d/zB5aguQAKAmO4or+EMrg,FnGqEGpkpkm2e3fz7pe3fB,,,N,0,0,,,2007-02-01 02:41,2007-02-04 01:00,hbe4678,hbe4678,2007-08-16 08:00,2007-08-19 17:00,24
391,12456572,14517,6815870,13329,1,0,N,N,N,CP_Units,TT_Task,DT_FixedDUR2,RV_OK,TK_NotStart,CO03AI0120,"03A Instrument JB's, Field Instr, Tray, Cable",,448,728,272,0,0,0,272,0,0,0,,,,2007-09-19 08:00,2007-11-15 17:00,,2007-07-12 08:00,2007-08-20 17:00,2007-07-12 08:00,2007-08-20 17:00,2007-07-12 08:00,2007-08-20 17:00,,2007-09-19 08:00,2007-11-15 17:00,,PT_Normal,,,,,H2da8FwwRseodnAjg9H4KQ,W/rBVpp5nEGpOlZ0TRHZBh,,,N,0,0,,,2007-02-01 02:41,2007-02-01 02:43,hbe4678,hbe4678,2007-07-12 08:00,2007-08-20 17:00,272
392,12456573,14517,6815870,13329,1,0,N,N,N,CP_Units,TT_Task,DT_FixedDUR2,RV_OK,TK_NotStart,CO03AI0130,03A Install In Line Instruments,,496.016666666667,776,24,0,0,0,24,0,0,0,,,,2007-11-24 08:01,2007-11-27 08:01,,2007-08-21 08:00,2007-08-23 17:00,2007-08-21 08:00,2007-08-23 17:00,2007-08-21 08:00,2007-08-23 17:00,,2007-11-24 08:01,2007-11-27 08:01,,PT_Normal,,,,,QirNzbypRV2dqjETfinhpw,2lrL4lM4x0yBt0mJYOmiDh,,,N,0,0,,,2007-02-01 02:41,2007-02-04 01:00,hbe4678,hbe4678,2007-08-21 08:00,2007-08-23 17:00,24
393,12456574,14517,6815870,13329,1,0,N,N,N,CP_Units,TT_Task,DT_FixedDUR2,RV_OK,TK_NotStart,CO03AI0140,03A Continuity Testing,,-280,0,24,0,0,0,24,0,0,0,,,,2007-11-20 08:00,2007-11-22 17:00,,2008-01-06 08:00,2008-01-08 17:00,2008-01-06 08:00,2008-01-08 17:00,2008-01-06 08:00,2008-01-08 17:00,,2007-11-20 08:00,2007-11-22 17:00,,PT_Normal,,,,,R7ynID0BR4+GWjroL1+/5A,B/W9Y2QrZkuNZkbY/b2jXx,,,N,0,0,,,2007-02-01 02:41,2007-02-01 02:43,hbe4678,hbe4678,2008-01-06 08:00,2008-01-08 17:00,24
394,12456575,14517,6815945,13332,1,0,N,N,N,CP_Units,TT_Task,DT_FixedDUR2,RV_OK,TK_NotStart,SC03AI0150,03A Function Testing,,-375.983333333333,0,88,0,0,0,88,0,0,0,,,,2007-11-23 08:01,2007-12-04 08:01,,2008-01-09 08:00,2008-01-19 17:00,2008-01-09 08:00,2008-01-19 17:00,2008-01-09 08:00,2008-01-19 17:00,,2007-11-23 08:01,2007-12-04 08:01,,PT_Normal,,,,,AuZEtAz4RAmO8axtqW3PCg,UFO+3utU6E6mf46imQYIMR,,,N,0,0,,,2007-02-01 02:41,2007-02-04 01:00,hbe4678,hbe4678,2008-01-09 08:00,2008-01-19 17:00,88
395,12456576,14517,6815870,13329,1,0,N,N,N,CP_Units,TT_WBS,DT_FixedDUR2,RV_OK,TK_NotStart,WO030I0100,030 Install Instruments & Test,1341,328.016666666667,2904,1496,0,5981.03,5981.03,1496,0,0,0,,,,2007-07-23 08:00,2008-04-05 08:01,,2007-06-16 08:00,2008-02-16 17:00,2007-06-16 08:00,2008-02-16 17:00,2007-06-16 08:00,2008-02-16 17:00,,2007-07-23 08:00,2008-04-05 08:01,,PT_Normal,,,,,MTPA3NHNS7KFCcxCjK6x7Q,N+G5AQeS80KSEjcMrp5/kx,,,N,0,0,,,2007-02-01 02:41,2007-02-04 01:05,hbe4678,hbe4678,2007-06-16 08:00,2008-02-16 17:00,1496
396,12456577,14517,6815870,13329,1,0,N,N,N,CP_Units,TT_Task,DT_FixedDUR2,RV_OK,TK_NotStart,CO03BI0120,"03B Instrument JB's, Field Instr, Tray, Cable",,1104.01666666667,632,264,0,0,0,264,0,0,0,,,,2008-02-16 08:01,2008-03-25 08:01,,2007-08-11 08:00,2007-09-22 17:00,2007-08-11 08:00,2007-09-22 17:00,2007-08-11 08:00,2007-09-22 17:00,,2008-02-16 08:01,2008-03-25 08:01,,PT_Normal,,,,,x8wMiYf8STi+Uh1vsnhZQA,W/rBVpp5nEGpOlZ0TRHZBh,,,N,0,0,,,2007-02-01 02:41,2007-02-04 01:00,hbe4678,hbe4678,2007-08-11 08:00,2007-09-22 17:00,264
397,12456578,14517,6815870,13329,1,0,N,N,N,CP_Units,TT_Task,DT_FixedDUR2,RV_OK,TK_NotStart,CO03BI0130,03B Install In Line Instruments,,1104.01666666667,632,24,0,0,0,24,0,0,0,,,,2008-03-25 08:01,2008-03-29 08:01,,2007-09-24 08:00,2007-09-29 17:00,2007-09-24 08:00,2007-09-29 17:00,2007-09-24 08:00,2007-09-29 17:00,,2008-03-25 08:01,2008-03-29 08:01,,PT_Normal,,,,,1ka1A8zhTaKN7paKRemkmw,2lrL4lM4x0yBt0mJYOmiDh,,,N,0,0,,,2007-02-01 02:41,2007-02-04 01:00,hbe4678,hbe4678,2007-09-24 08:00,2007-09-29 17:00,24
398,12456579,14517,6815870,13329,1,0,N,N,N,CP_Units,TT_Task,DT_FixedDUR2,RV_OK,TK_NotStart,CO03BI0140,03B Continuity Testing,,472.016666666667,0,24,0,0,0,24,0,0,0,,,,2008-03-29 08:01,2008-04-01 08:01,,2008-01-20 08:00,2008-01-22 17:00,2008-01-20 08:00,2008-01-22 17:00,2008-01-20 08:00,2008-01-22 17:00,,2008-03-29 08:01,2008-04-01 08:01,,PT_Normal,,,,,HbYSZAazQDmzPen38DypaA,B/W9Y2QrZkuNZkbY/b2jXx,,,N,0,0,,,2007-02-01 02:41,2007-02-04 01:00,hbe4678,hbe4678,2008-01-20 08:00,2008-01-22 17:00,24
399,12456580,14517,6815945,13332,1,0,N,N,N,CP_Units,TT_Task,DT_FixedDUR2,RV_OK,TK_NotStart,SC03BI0150,03B Function Testing,,552.016666666667,0,88,0,0,0,88,0,0,0,,,,2008-04-01 08:01,2008-04-12 08:01,,2008-01-23 08:00,2008-02-02 17:00,2008-01-23 08:00,2008-02-02 17:00,2008-01-23 08:00,2008-02-02 17:00,,2008-04-01 08:01,2008-04-12 08:01,,PT_Normal,,,,,w8ZRNxRhSnihvDYBmarOBw,UFO+3utU6E6mf46imQYIMR,,,N,0,0,,,2007-02-01 02:41,2007-02-04 01:00,hbe4678,hbe4678,2008-01-23 08:00,2008-02-02 17:00,88
400,12456581,14517,6815870,13329,1,0,N,N,N,CP_Units,TT_Task,DT_FixedDUR2,RV_OK,TK_NotStart,CO03CI0120,"03C Instrument JB's, Field Instr, Tray, Cable",,696,848,272,0,0,0,272,0,0,0,,,,2007-11-13 08:00,2007-12-27 17:00,,2007-07-12 08:00,2007-08-20 17:00,2007-07-12 08:00,2007-08-20 17:00,2007-07-12 08:00,2007-08-20 17:00,,2007-11-13 08:00,2007-12-27 17:00,,PT_Normal,,,,,mXdVsKmaSF2AOskGHrpi7g,prRNrEtoJ0KM2+c0fP5WVx,,,N,0,0,,,2007-02-01 02:41,2007-02-01 02:43,hbe4678,hbe4678,2007-07-12 08:00,2007-08-20 17:00,272
401,12456582,14517,6815870,13329,1,0,N,N,N,CP_Units,TT_Task,DT_FixedDUR2,RV_OK,TK_NotStart,CO03CI0130,03C Install In Line Instruments,,696.016666666667,856,24,0,0,0,24,0,0,0,,,,2007-12-29 08:01,2008-01-01 08:01,,2007-08-21 08:00,2007-08-23 17:00,2007-08-21 08:00,2007-08-23 17:00,2007-08-21 08:00,2007-08-23 17:00,,2007-12-29 08:01,2008-01-01 08:01,,PT_Normal,,,,,HNzcHxm3TM+GDA2mXmcINQ,sDHnZ1obm0mwKUsAa+JNJB,,,N,0,0,,,2007-02-01 02:41,2007-02-04 01:00,hbe4678,hbe4678,2007-08-21 08:00,2007-08-23 17:00,24
402,12456583,14517,6815870,13329,1,0,N,N,N,CP_Units,TT_Task,DT_FixedDUR2,RV_OK,TK_NotStart,CO03CI0140,03C Continuity Testing,,-152,0,24,0,0,0,24,0,0,0,,,,2008-01-01 08:00,2008-01-03 17:00,,2008-01-23 08:00,2008-01-26 17:00,2008-01-23 08:00,2008-01-26 17:00,2008-01-23 08:00,2008-01-26 17:00,,2008-01-01 08:00,2008-01-03 17:00,,PT_Normal,,,,,mi7c+o91SDWczV4kam4E6Q,i8Hncafn5ku8J8GVw3VR1R,,,N,0,0,,,2007-02-01 02:41,2007-02-01 02:43,hbe4678,hbe4678,2008-01-23 08:00,2008-01-26 17:00,24
403,12456584,14517,6815945,13332,1,0,N,N,N,CP_Units,TT_Task,DT_FixedDUR2,RV_OK,TK_NotStart,SC03CI0150,03C Function Testing,,-183.983333333333,0,88,0,0,0,88,0,0,0,,,,2008-01-04 08:01,2008-01-15 08:01,,2008-01-27 08:00,2008-02-06 17:00,2008-01-27 08:00,2008-02-06 17:00,2008-01-27 08:00,2008-02-06 17:00,,2008-01-04 08:01,2008-01-15 08:01,,PT_Normal,,,,,YRInyzPLToGaSXzGepKqvA,4TK1WRt8RUiVr7PptFmU7h,,,N,0,0,,,2007-02-01 02:41,2007-02-04 01:00,hbe4678,hbe4678,2008-01-27 08:00,2008-02-06 17:00,88
404,12456585,14517,6815870,13329,1,0,N,N,N,CP_Units,TT_Task,DT_FixedDUR2,RV_OK,TK_NotStart,CO03DI0120,"03D Instrument JB's, Field Instr, Tray, Cable",,800,935.983333333333,136,0,0,0,136,0,0,0,,,,2007-12-08 08:01,2008-01-02 08:01,,2007-07-22 08:01,2007-08-11 08:01,2007-07-22 08:01,2007-08-11 08:01,2007-07-22 08:01,2007-08-11 08:01,,2007-12-08 08:01,2008-01-02 08:01,,PT_Normal,,,,,Nw9GB+4kTEW2sz7wwmKNrA,RXhPj/E8N0aHYjZtHwPf6h,,,N,0,0,,,2007-02-01 02:41,2007-02-04 01:00,hbe4678,hbe4678,2007-07-22 08:01,2007-08-11 08:01,136
405,12456586,14517,6815870,13329,1,0,N,N,N,CP_Units,TT_Task,DT_FixedDUR2,RV_OK,TK_NotStart,CO03DI0130,03D Install In Line Instruments,,776,911.983333333333,16,0,0,0,16,0,0,0,,,,2007-12-30 08:01,2008-01-01 08:01,,2007-08-11 08:01,2007-08-13 08:01,2007-08-11 08:01,2007-08-13 08:01,2007-08-11 08:01,2007-08-13 08:01,,2007-12-30 08:01,2008-01-01 08:01,,PT_Normal,,,,,XXscusSGQw2yvFWnISFMSA,vCxgce3pB0yBcNorhnk+1R,,,N,0,0,,,2007-02-01 02:41,2007-02-04 01:00,hbe4678,hbe4678,2007-08-11 08:01,2007-08-13 08:01,16
406,12456587,14517,6815870,13329,1,0,N,N,N,CP_Units,TT_Task,DT_FixedDUR2,RV_OK,TK_NotStart,CO03DI0140,03D Continuity Testing,,-135.983333333333,0,16,0,0,0,16,0,0,0,,,,2008-01-07 08:01,2008-01-09 08:01,,2008-01-27 08:00,2008-01-28 17:00,2008-01-27 08:00,2008-01-28 17:00,2008-01-27 08:00,2008-01-28 17:00,,2008-01-07 08:01,2008-01-09 08:01,,PT_Normal,,,,,qv4+P+LHQgGhpBQiNe5XeQ,NOWicfdbAUO4A6VcSS6l8B,,,N,0,0,,,2007-02-01 02:41,2007-02-04 01:00,hbe4678,hbe4678,2008-01-27 08:00,2008-01-28 17:00,16
407,12456588,14517,6815945,13332,1,0,N,N,N,CP_Units,TT_Task,DT_FixedDUR2,RV_OK,TK_NotStart,SC03DI0150,03D Function Testing,,-159.983333333333,0,48,0,0,0,48,0,0,0,,,,2008-01-09 08:01,2008-01-15 08:01,,2008-01-29 08:00,2008-02-03 17:00,2008-01-29 08:00,2008-02-03 17:00,2008-01-29 08:00,2008-02-03 17:00,,2008-01-09 08:01,2008-01-15 08:01,,PT_Normal,,,,,j9t6LtvxSzeaePm21G2XmQ,bl3yTL97qkGUuqyFr/mcgB,,,N,0,0,,,2007-02-01 02:41,2007-02-04 01:00,hbe4678,hbe4678,2008-01-29 08:00,2008-02-03 17:00,48
408,12456589,14517,6815870,13329,1,0,N,N,N,CP_Units,TT_Task,DT_FixedDUR2,RV_OK,TK_NotStart,CO03EI0120,"03E Instrument JB's, Field Instr, Tray, Cable",,488,744,432,0,0,0,432,0,0,0,,,,2007-10-01 08:00,2007-12-15 17:00,,2007-07-12 08:00,2007-09-12 17:00,2007-07-12 08:00,2007-09-12 17:00,2007-07-12 08:00,2007-09-12 17:00,,2007-10-01 08:00,2007-12-15 17:00,,PT_Normal,,,,,mGdQ6NvZQnm1U0H0T1OWCA,Iut/G0onFkql2a4yRe4o4x,,,N,0,0,,,2007-02-01 02:41,2007-02-01 02:43,hbe4678,hbe4678,2007-07-12 08:00,2007-09-12 17:00,432
409,12456590,14517,6815870,13329,1,0,N,N,N,CP_Units,TT_Task,DT_FixedDUR2,RV_OK,TK_NotStart,CO03EI0130,03E Install In Line Instruments,,520.016666666667,784,40,0,0,0,40,0,0,0,,,,2007-12-26 08:01,2008-01-01 08:01,,2007-09-15 08:00,2007-09-24 17:00,2007-09-15 08:00,2007-09-24 17:00,2007-09-15 08:00,2007-09-24 17:00,,2007-12-26 08:01,2008-01-01 08:01,,PT_Normal,,,,,vq7g1T5lR4aUqldHtYnKEw,kjij0vO37EG0NdzRXaAF/R,,,N,0,0,,,2007-02-01 02:41,2007-02-04 01:00,hbe4678,hbe4678,2007-09-15 08:00,2007-09-24 17:00,40
410,12456591,14517,6815870,13329,1,0,N,N,N,CP_Units,TT_Task,DT_FixedDUR2,RV_OK,TK_NotStart,CO03FI0140,03F Continuity Testing,,-8,0,24,0,0,0,24,0,0,0,,,,2008-01-08 08:00,2008-01-10 17:00,,2008-01-09 08:00,2008-01-12 17:00,2008-01-09 08:00,2008-01-12 17:00,2008-01-09 08:00,2008-01-12 17:00,,2008-01-08 08:00,2008-01-10 17:00,,PT_Normal,,,,,CF0pYIIsT4aAGEBpmMgO3w,Gm+kcgrMYUqaXeYlpGfVxB,,,N,0,0,,,2007-02-01 02:41,2007-02-01 02:43,hbe4678,hbe4678,2008-01-09 08:00,2008-01-12 17:00,24
411,12456592,14517,6815945,13332,1,0,N,N,N,CP_Units,TT_Task,DT_FixedDUR2,RV_OK,TK_NotStart,SC03FI0150,03F Function Testing,,-15.9833333333333,0,88,0,0,0,88,0,0,0,,,,2008-01-11 08:01,2008-01-22 08:01,,2008-01-13 08:00,2008-01-23 17:00,2008-01-13 08:00,2008-01-23 17:00,2008-01-13 08:00,2008-01-23 17:00,,2008-01-11 08:01,2008-01-22 08:01,,PT_Normal,,,,,ET9uHe9zRSOXRrOMfpjkZA,wfPbna6biUGOT8eTotrw1h,,,N,0,0,,,2007-02-01 02:41,2007-02-04 01:00,hbe4678,hbe4678,2008-01-13 08:00,2008-01-23 17:00,88
412,12456593,14517,6815871,13329,1,0,N,N,N,CP_Units,TT_Task,DT_FixedDUR2,RV_OK,TK_NotStart,CO03BC0130,03B Install Paving,,1896.01666666667,592,96,0,0,0,96,0,0,0,,,,2008-02-02 08:01,2008-02-16 08:01,,2007-04-03 08:00,2007-04-16 17:00,2007-04-03 08:00,2007-04-16 17:00,2007-04-03 08:00,2007-04-16 17:00,,2008-02-02 08:01,2008-02-16 08:01,,PT_Normal,,,,,5oFmi0EURuS+f010Je/eIQ,kV1V/wbvxE+FDvkQ4Mhzwx,,,N,0,0,,,2007-02-01 02:41,2007-02-04 01:00,hbe4678,hbe4678,2007-04-03 08:00,2007-04-16 17:00,96
413,12456594,14517,6815871,13329,1,0,N,N,N,CP_Units,TT_Task,DT_FixedDUR2,RV_OK,TK_NotStart,CO03CC0130,03C Install Paving,,1264,384,48,0,0,0,48,0,0,0,2007-04-14 08:00,,,2007-11-06 08:00,2007-11-12 17:00,,2007-04-14 08:00,2007-04-19 17:00,2007-04-14 08:00,2007-04-19 17:00,2007-04-14 08:00,2007-04-19 17:00,,2007-11-06 08:00,2007-11-12 17:00,CS_MSOA,PT_Normal,,,,,V9Msx4bPRmucpvcyuBGveQ,HTEbki7//E+go0Lii/z1aR,,,N,0,0,,,2007-02-01 02:41,2007-02-01 02:43,hbe4678,hbe4678,2007-04-14 08:00,2007-04-19 17:00,48
414,12456595,14517,6815871,13329,1,0,N,N,N,CP_Units,TT_Task,DT_FixedDUR2,RV_OK,TK_NotStart,CO03DC0130,03D Install Paving,,1512.01666666667,672,48,0,0,0,48,0,0,0,2007-03-01 17:00,,,2007-10-31 08:01,2007-11-07 08:01,,2007-03-03 08:00,2007-03-08 17:00,2007-03-03 08:00,2007-03-08 17:00,2007-03-03 08:00,2007-03-08 17:00,,2007-10-31 08:01,2007-11-07 08:01,CS_MSOA,PT_Normal,,,,,eo+60+RiSaWOjM7pUzAqMA,JTquE6XgNkSAQwg4nrmWXx,,,N,0,0,,,2007-02-01 02:41,2007-02-04 01:00,hbe4678,hbe4678,2007-03-03 08:00,2007-03-08 17:00,48
415,12456596,14517,6815871,13329,1,0,N,N,N,CP_Units,TT_Task,DT_FixedDUR2,RV_OK,TK_NotStart,CO03EC0130,03E Install Paving,,864,192,96,0,0,0,96,0,0,0,2007-05-05 08:00,,,2007-09-08 08:00,2007-09-29 17:00,,2007-05-05 08:00,2007-05-17 17:00,2007-05-05 08:00,2007-05-17 17:00,2007-05-05 08:00,2007-05-17 17:00,,2007-09-08 08:00,2007-09-29 17:00,CS_MSOA,PT_Normal,,,,,qRFLQEMSSkeRos8z4RX5aA,TaNz2E32l0ye5nXwgWtxWB,,,N,0,0,,,2007-02-01 02:41,2007-02-01 02:43,hbe4678,hbe4678,2007-05-05 08:00,2007-05-17 17:00,96
416,12456597,14517,6815871,13329,1,0,N,N,N,CP_Units,TT_Task,DT_FixedDUR2,RV_OK,TK_NotStart,CO03FC0130,03F Install Paving,,1176.01666666667,288,96,0,0,0,96,0,0,0,2007-04-21 08:00,,,2007-10-31 08:01,2007-11-14 08:01,,2007-04-21 08:00,2007-05-03 17:00,2007-04-21 08:00,2007-05-03 17:00,2007-04-21 08:00,2007-05-03 17:00,,2007-10-31 08:01,2007-11-14 08:01,CS_MSOA,PT_Normal,,,,,qCpVtDXiQr6KXi2ocTrM5w,i9hr8fQAuE6GqQn2TZgpXx,,,N,0,0,,,2007-02-01 02:41,2007-02-04 01:00,hbe4678,hbe4678,2007-04-21 08:00,2007-05-03 17:00,96
417,12456598,14517,6815871,13329,1,0,N,N,N,CP_Units,TT_Task,DT_FixedDUR2,RV_OK,TK_NotStart,CO03AC0130,03A Install Paving,,1064,616,48,0,0,0,48,0,0,0,2007-04-07 08:00,,,2007-09-09 08:00,2007-09-17 17:00,,2007-04-07 08:00,2007-04-12 17:00,2007-04-07 08:00,2007-04-12 17:00,2007-04-07 08:00,2007-04-12 17:00,,2007-09-09 08:00,2007-09-17 17:00,CS_MSOA,PT_Normal,,,,,tKU9S4r7QoaJL+PKomf5iA,kV1V/wbvxE+FDvkQ4Mhzwx,,,N,0,0,,,2007-02-01 02:41,2007-02-01 02:43,hbe4678,hbe4678,2007-04-07 08:00,2007-04-12 17:00,48
418,12456599,14517,6815871,13329,1,0,N,N,N,CP_Units,TT_WBS,DT_FixedDUR2,RV_OK,TK_NotStart,WO030C0110,030 Concrete Paving,1355,1680.01666666667,4592,528,0,362.47,362.47,528,0,0,0,,,,2007-09-08 08:00,2008-02-16 08:01,,2007-03-03 08:00,2007-05-17 17:00,2007-03-03 08:00,2007-05-17 17:00,2007-03-03 08:00,2007-05-17 17:00,,2007-09-08 08:00,2008-02-16 08:01,,PT_Normal,,,,,eg0qpUycTxyrMCMr+uIL+A,vDQJl+EvTdWkrqx5uzbY+Q,,,N,0,0,,,2007-02-01 02:41,2007-02-04 01:05,hbe4678,hbe4678,2007-03-03 08:00,2007-05-17 17:00,528
419,12456600,14517,6815874,13329,0,0,N,N,N,CP_Units,TT_FinMile,DT_FixedDUR2,RV_OK,TK_NotStart,CO04AT0110,04A Mechanical Completion,,864,0,0,0,0,0,0,0,0,0,,,,2008-03-15 08:01,2008-03-15 08:01,,2007-11-04 08:01,2007-11-04 08:01,2007-11-04 08:01,2007-11-04 08:01,2007-11-04 08:01,2007-11-04 08:01,,2008-03-15 08:01,2008-03-15 08:01,,PT_Normal,,,,,1IiNJ7SzTzeJrntWRZpznA,aIPPG1fsS0S4VrKOxiP8Rh,,,N,0,0,,,2007-02-01 02:41,2007-02-01 02:43,hbe4678,hbe4678,2007-11-04 08:01,2007-11-04 08:01,0
420,12456601,14517,6815874,13332,0,0,N,N,N,CP_Units,TT_FinMile,DT_FixedDUR2,RV_OK,TK_NotStart,SC04AT0120,04A RFSU,,1056,1527.98333333333,0,0,0,0,0,0,0,0,,,,2008-04-12 08:01,2008-04-12 08:01,,2007-12-02 08:01,2007-12-02 08:01,2007-12-02 08:01,2007-12-02 08:01,2007-12-02 08:01,2007-12-02 08:01,,2008-04-12 08:01,2008-04-12 08:01,,PT_Normal,,,,,4Vdb0AHBQHewGHElVmUtaQ,cEKhehJH7EiVL2kuUcp8pR,,,N,0,0,,,2007-02-01 02:41,2007-02-04 01:00,hbe4678,hbe4678,2007-12-02 08:01,2007-12-02 08:01,0
421,12456602,14517,6815875,13329,1,0,N,N,N,CP_Units,TT_Task,DT_FixedDUR2,RV_OK,TK_NotStart,CO04AU3110,04A U/G Fiber Optic Cable Installation,,1096,232,896,0,0,0,896,0,0,0,2007-05-01 08:01,,,2007-10-30 08:01,2008-03-15 08:01,,2007-05-01 08:01,2007-09-09 08:01,2007-05-01 08:01,2007-09-09 08:01,2007-05-01 08:01,2007-09-09 08:01,,2007-10-30 08:01,2008-03-15 08:01,CS_MSOA,PT_Normal,,,,,OUq709bUQ1WY14oqwWkt7g,WMNIV3CEf0Oqm06Qsc6/vh,,,N,0,0,,,2007-02-01 02:41,2007-02-01 02:43,hbe4678,hbe4678,2007-05-01 08:01,2007-09-09 08:01,896
422,12456603,14517,6815875,13329,1,0,N,N,N,CP_Units,TT_WBS,DT_FixedDUR2,RV_OK,TK_NotStart,WO04AU3100,04A Install U/G Electrical,,1096,3815.98333333333,896,0,705,705,896,0,0,0,,,,2007-10-30 08:01,2008-03-15 08:01,,2007-05-01 08:01,2007-09-09 08:01,2007-05-01 08:01,2007-09-09 08:01,2007-05-01 08:01,2007-09-09 08:01,,2007-10-30 08:01,2008-03-15 08:01,,PT_Normal,,,,,2kMvsbP0QgS2k6MfJVScow,60YU/Vs430GP6vKIHjI41Q,,,N,0,0,,,2007-02-01 02:41,2007-02-04 01:05,hbe4678,hbe4678,2007-05-01 08:01,2007-09-09 08:01,896
423,12456604,14517,6815876,13329,1,0,N,N,N,CP_Units,TT_Task,DT_FixedDUR2,RV_OK,TK_NotStart,CO04AU4130,04A Punchlist / Test U/G Piping,,864,0,800,0,0,0,800,0,0,0,,,,2007-10-23 08:01,2008-02-23 08:01,,2007-05-28 08:01,2007-10-01 08:01,2007-05-28 08:01,2007-10-01 08:01,2007-05-28 08:01,2007-10-01 08:01,,2007-10-23 08:01,2008-02-23 08:01,,PT_Normal,,,,,GN/8XVRoQCONgbuHDt6sFw,X8T+JRsJZE2q7qfzKk+5Sx,,,N,0,0,,,2007-02-01 02:41,2007-02-01 02:43,hbe4678,hbe4678,2007-05-28 08:01,2007-10-01 08:01,800
424,12456605,14517,6815876,13329,1,0,N,N,N,CP_Units,TT_Task,DT_FixedDUR2,RV_OK,TK_NotStart,CO04AU4120,04A U/G Piping Installation,,864,0,1312,0,0,0,1312,0,0,0,2007-01-08 08:00,,,2007-07-04 08:01,2008-02-09 08:01,,2007-02-28 08:01,2007-09-08 08:01,2007-02-28 08:01,2007-09-08 08:01,2007-02-28 08:01,2007-09-08 08:01,,2007-07-04 08:01,2008-02-09 08:01,CS_MSOA,PT_Normal,,,,,jEorws1UQzmsUuzUSL8k0w,7IN57z2gu0O4xVV8qG5+Bh,,,N,0,0,,,2007-02-01 02:41,2007-02-01 02:43,hbe4678,hbe4678,2007-02-28 08:01,2007-09-08 08:01,1312
425,12456606,14517,6815876,13329,1,0,N,N,N,CP_Units,TT_WBS,DT_FixedDUR2,RV_OK,TK_NotStart,WO04AU4100,04A U/G Piping Installation,,864,3727.98333333333,1408,0,117060.77,117060.77,1408,0,0,0,,,,2007-07-04 08:01,2008-02-23 08:01,,2007-02-28 08:01,2007-10-01 08:01,2007-02-28 08:01,2007-10-01 08:01,2007-02-28 08:01,2007-10-01 08:01,,2007-07-04 08:01,2008-02-23 08:01,,PT_Normal,,,,,5F6c48S7QP65HWt9BxynbQ,HRm0QADUM0qKP98rSrOiYg,,,N,0,0,,,2007-02-01 02:41,2007-02-04 01:05,hbe4678,hbe4678,2007-02-28 08:01,2007-10-01 08:01,1408
426,12456607,14517,6815876,13329,1,0,N,N,N,CP_Units,TT_WBS,DT_FixedDUR2,RV_OK,TK_NotStart,WO04AE0100,04A Above Ground Electrical,,864,3727.98333333333,1408,0,0,0,1408,0,0,0,,,,2007-07-04 08:01,2008-02-23 08:01,,2007-02-28 08:01,2007-10-01 08:01,2007-02-28 08:01,2007-10-01 08:01,2007-02-28 08:01,2007-10-01 08:01,,2007-07-04 08:01,2008-02-23 08:01,,PT_Normal,,,,,R9CvlAAAR7mJo5Htno2fcg,TvjxR6//j0u2FVXQk6IXgB,,,N,0,0,,,2007-02-01 02:41,2007-02-04 01:05,hbe4678,hbe4678,2007-02-28 08:01,2007-10-01 08:01,1408
427,12456608,14517,6815876,13329,1,0,N,N,N,CP_Units,TT_WBS,DT_FixedDUR2,RV_OK,TK_NotStart,WO04AI0100,04A Install Instruments & Test,,864,3727.98333333333,1408,0,0,0,1408,0,0,0,,,,2007-07-04 08:01,2008-02-23 08:01,,2007-02-28 08:01,2007-10-01 08:01,2007-02-28 08:01,2007-10-01 08:01,2007-02-28 08:01,2007-10-01 08:01,,2007-07-04 08:01,2008-02-23 08:01,,PT_Normal,,,,,8dUf0q8NRKOUGeuRDa7krg,60YU/Vs430GP6vKIHjI41Q,,,N,0,0,,,2007-02-01 02:41,2007-02-04 01:05,hbe4678,hbe4678,2007-02-28 08:01,2007-10-01 08:01,1408
428,12456609,14517,6815876,13329,1,0,N,N,N,CP_Units,TT_WBS,DT_FixedDUR2,RV_OK,TK_NotStart,WO04AM0100,04A Major Equipment,,864,3727.98333333333,1408,0,0,0,1408,0,0,0,,,,2007-07-04 08:01,2008-02-23 08:01,,2007-02-28 08:01,2007-10-01 08:01,2007-02-28 08:01,2007-10-01 08:01,2007-02-28 08:01,2007-10-01 08:01,,2007-07-04 08:01,2008-02-23 08:01,,PT_Normal,,,,,yVTKRN0ORLihbXZfVqrcXA,60YU/Vs430GP6vKIHjI41Q,,,N,0,0,,,2007-02-01 02:41,2007-02-04 01:05,hbe4678,hbe4678,2007-02-28 08:01,2007-10-01 08:01,1408
429,12456610,14517,6815876,13329,1,0,N,N,N,CP_Units,TT_WBS,DT_FixedDUR2,RV_OK,TK_NotStart,WO04AS0100,04A Erect Steel,,864,3727.98333333333,1408,0,7.73,7.73,1408,0,0,0,,,,2007-07-04 08:01,2008-02-23 08:01,,2007-02-28 08:01,2007-10-01 08:01,2007-02-28 08:01,2007-10-01 08:01,2007-02-28 08:01,2007-10-01 08:01,,2007-07-04 08:01,2008-02-23 08:01,,PT_Normal,,,,,E9kUSfWITomjZCR6LzisSA,HRm0QADUM0qKP98rSrOiYg,,,N,0,0,,,2007-02-01 02:41,2007-02-04 01:05,hbe4678,hbe4678,2007-02-28 08:01,2007-10-01 08:01,1408
430,12456611,14517,6815877,13329,1,0,N,N,N,CP_Units,TT_WBS,DT_FixedDUR2,RV_OK,TK_Active,WO04AV1100,04A Paint,,1184.01666666667,4336,1024,2015.23,52305.31,54320.54,1024,0,0,0,,2007-01-15 00:00,,2007-07-18 08:01,2008-01-12 08:01,,2007-01-27 08:00,2007-06-24 17:00,2007-01-27 08:00,2007-06-24 17:00,2007-01-13 08:00,2007-06-10 17:00,,2007-07-18 08:01,2008-01-12 08:01,,PT_Normal,,,,,riv8gwepQYWUllpuGSNcKA,jc1YcQWJOkS0Bg5tmHR7Sw,,,N,0,0,,,2007-02-01 02:41,2007-02-04 01:05,hbe4678,hbe4678,2007-01-27 08:00,2007-06-24 17:00,1024
431,12456612,14517,6815877,13329,1,0,N,N,N,CP_Units,TT_Task,DT_FixedDUR2,RV_OK,TK_Active,CO04AV1100,04A Paint,,1184.01666666667,320.016666666667,1024,0,0,0,1024,0,0,0,,2007-01-15 00:00,,2007-07-18 08:01,2008-01-12 08:01,,2007-01-27 08:00,2007-06-24 17:00,2007-01-27 08:00,2007-06-24 17:00,2007-01-13 08:00,2007-06-10 17:00,,2007-07-18 08:01,2008-01-12 08:01,,PT_Normal,,,,,r7ZUlnX3Qw6jtP8DVHeM+g,TclAER0wSRO/Kadus74jXw,,,N,0,0,,,2007-02-01 02:41,2007-02-04 01:00,hbe4678,hbe4678,2007-01-27 08:00,2007-06-24 17:00,1024
432,12456613,14517,6815878,13329,1,0,N,N,N,CP_Units,TT_WBS,DT_FixedDUR2,RV_OK,TK_NotStart,WO04AV2100,04A Insulation,,864,3631.98333333333,800,0,0,0,800,0,0,0,,,,2007-11-06 08:01,2008-03-08 08:01,,2007-06-11 08:01,2007-10-28 08:01,2007-06-11 08:01,2007-10-28 08:01,2007-06-11 08:01,2007-10-28 08:01,,2007-11-06 08:01,2008-03-08 08:01,,PT_Normal,,,,,a6VoLqtFTRe6/M7R4tjJsA,LY3ArhQKz0imqUdZ6oaGTQ,,,N,0,0,,,2007-02-01 02:41,2007-02-04 01:05,hbe4678,hbe4678,2007-06-11 08:01,2007-10-28 08:01,800
433,12456614,14517,6815878,13329,1,0,N,N,N,CP_Units,TT_Task,DT_FixedDUR2,RV_OK,TK_NotStart,CO04AV2110,04A Insulation,,864,0,800,0,0,0,800,0,0,0,,,,2007-11-06 08:01,2008-03-08 08:01,,2007-06-11 08:01,2007-10-28 08:01,2007-06-11 08:01,2007-10-28 08:01,2007-06-11 08:01,2007-10-28 08:01,,2007-11-06 08:01,2008-03-08 08:01,,PT_Normal,,,,,hXSnjeEaS72AzX82D1WZbg,8+IF+9uiTV6QLNZy0iKcmg,,,N,0,0,,,2007-02-01 02:41,2007-02-01 02:43,hbe4678,hbe4678,2007-06-11 08:01,2007-10-28 08:01,800
434,12456615,14517,6815882,13329,1,0,N,N,N,CP_Units,TT_WBS,DT_FixedDUR2,RV_OK,TK_NotStart,WO04AC0100,04A Concrete (Valve Boxes & Paving),1355,1040,3759.98333333333,800,0,16094.12,16094.12,800,0,0,0,,,,2007-11-13 08:01,2008-03-15 08:01,,2007-05-23 08:01,2007-09-22 08:01,2007-05-23 08:01,2007-09-22 08:01,2007-05-23 08:01,2007-09-22 08:01,,2007-11-13 08:01,2008-03-15 08:01,,PT_Normal,,,,,LJEThrSnSu6bBz2GshS13Q,8/v5URX1ZUS3A6OuVK5ySR,,,N,0,0,,,2007-02-01 02:41,2007-02-04 01:05,hbe4678,hbe4678,2007-05-23 08:01,2007-09-22 08:01,800
435,12456616,14517,6815882,13329,1,0,N,N,N,CP_Units,TT_Task,DT_FixedDUR2,RV_OK,TK_NotStart,CO04AC0110,04A Concrete (Valve Boxes & Paving),,1040,176,800,0,0,0,800,0,0,0,,,,2007-11-13 08:01,2008-03-15 08:01,,2007-05-23 08:01,2007-09-22 08:01,2007-05-23 08:01,2007-09-22 08:01,2007-05-23 08:01,2007-09-22 08:01,,2007-11-13 08:01,2008-03-15 08:01,,PT_Normal,,,,,g4JNTdCKSKyPEEwj5uorrg,C4lvzs8ZS7+5OMS3EUo3Dg,,,N,0,0,,,2007-02-01 02:41,2007-02-01 02:43,hbe4678,hbe4678,2007-05-23 08:01,2007-09-22 08:01,800
436,12456617,14517,6815889,13329,1,0,N,N,N,CP_Units,TT_WBS,DT_FixedDUR2,RV_OK,TK_NotStart,WO04AK0100,04A Site Prep (Leveling),1355,864,3583.98333333333,800,0,12426.54,12426.54,800,0,0,0,,,,2007-11-13 08:01,2008-03-15 08:01,,2007-06-18 08:01,2007-11-04 08:01,2007-06-18 08:01,2007-11-04 08:01,2007-06-18 08:01,2007-11-04 08:01,,2007-11-13 08:01,2008-03-15 08:01,,PT_Normal,,,,,IFEvrF49Qp6wmXm8vgV/uw,TvjxR6//j0u2FVXQk6IXgB,,,N,0,0,,,2007-02-01 02:41,2007-02-04 01:05,hbe4678,hbe4678,2007-06-18 08:01,2007-11-04 08:01,800
437,12456618,14517,6815889,13329,1,0,N,N,N,CP_Units,TT_Task,DT_FixedDUR2,RV_OK,TK_NotStart,CO04AK0110,04A Site Prep (Leveling),,864,0,800,0,0,0,800,0,0,0,,,,2007-11-13 08:01,2008-03-15 08:01,,2007-06-18 08:01,2007-11-04 08:01,2007-06-18 08:01,2007-11-04 08:01,2007-06-18 08:01,2007-11-04 08:01,,2007-11-13 08:01,2008-03-15 08:01,,PT_Normal,,,,,2DxC8uj+QWebwi92sSaFKw,prA4RrujSXah8cAIA7LUNQ,,,N,0,0,,,2007-02-01 02:41,2007-02-01 02:43,hbe4678,hbe4678,2007-06-18 08:01,2007-11-04 08:01,800
438,12456619,14517,6815898,13329,1,0,N,N,N,CP_Units,TT_Task,DT_FixedDUR2,RV_OK,TK_NotStart,CO01GE0110,"01G Lighting JB's, Stands, Tray & Cable",,224,0,288,0,0,0,288,0,0,0,,,,2007-08-27 08:00,2007-10-29 17:00,,2007-07-25 08:00,2007-09-04 17:00,2007-07-25 08:00,2007-09-04 17:00,2007-07-25 08:00,2007-09-04 17:00,,2007-08-27 08:00,2007-10-29 17:00,,PT_Normal,,,,,/whBbRgTTBakw9Aaw9617Q,vxv9t1JzLEycHOsx8/3kLx,,,N,0,0,,,2007-02-01 02:41,2007-02-01 02:43,hbe4678,hbe4678,2007-07-25 08:00,2007-09-04 17:00,288
439,12456620,14517,6815898,13329,1,0,N,N,N,CP_Units,TT_Task,DT_FixedDUR2,RV_OK,TK_NotStart,CO01GE0120,01G Lighting Fixture Installation/Termination,,224,0,144,0,0,0,144,0,0,0,,,,2007-10-30 08:00,2007-11-19 17:00,,2007-09-05 08:00,2007-10-08 17:00,2007-09-05 08:00,2007-10-08 17:00,2007-09-05 08:00,2007-10-08 17:00,,2007-10-30 08:00,2007-11-19 17:00,,PT_Normal,,,,,xRrYQFaeStmAdO++H+o1UA,wzqPR8Khzk2Uk+VLrraabR,,,N,0,0,,,2007-02-01 02:41,2007-02-01 02:43,hbe4678,hbe4678,2007-09-05 08:00,2007-10-08 17:00,144
440,12456621,14517,6815898,13329,1,0,N,N,N,CP_Units,TT_Task,DT_FixedDUR2,RV_OK,TK_NotStart,CO01GE0130,"01G Power Tray, Cable, Terminations",,736,1016,192,0,0,0,192,0,0,0,,,,2007-10-23 08:00,2007-11-19 17:00,,2007-06-16 08:00,2007-07-12 17:00,2007-06-16 08:00,2007-07-12 17:00,2007-06-16 08:00,2007-07-12 17:00,,2007-10-23 08:00,2007-11-19 17:00,,PT_Normal,,,,,4JWSbrZCTeyE+AJsdNfkOQ,pXNLWHV32kGend84gtU/qh,,,N,0,0,,,2007-02-01 02:41,2007-02-01 02:43,hbe4678,hbe4678,2007-06-16 08:00,2007-07-12 17:00,192
441,12456622,14517,6815898,13329,1,0,N,N,N,CP_Units,TT_Task,DT_FixedDUR2,RV_OK,TK_NotStart,CO01HE0110,"01H Lighting JB's, Stands, Tray & Cable",,552.016666666667,0,144,0,0,0,144,0,0,0,,,,2007-10-23 08:01,2007-11-13 08:01,,2007-07-12 08:00,2007-08-01 17:00,2007-07-12 08:00,2007-08-01 17:00,2007-07-12 08:00,2007-08-01 17:00,,2007-10-23 08:01,2007-11-13 08:01,,PT_Normal,,,,,GvhsO/qKTk2MLWoRYz77sQ,aE7nQ49W60evVuvKRnRvuh,,,N,0,0,,,2007-02-01 02:41,2007-02-04 01:00,hbe4678,hbe4678,2007-07-12 08:00,2007-08-01 17:00,144
442,12456623,14517,6815898,13329,1,0,N,N,N,CP_Units,TT_Task,DT_FixedDUR2,RV_OK,TK_NotStart,CO01HE0120,01H Lighting Fixture Installation/Termination,,552.016666666667,280,96,0,0,0,96,0,0,0,,,,2007-11-13 08:01,2007-11-27 08:01,,2007-08-02 08:00,2007-08-15 17:00,2007-08-02 08:00,2007-08-15 17:00,2007-08-02 08:00,2007-08-15 17:00,,2007-11-13 08:01,2007-11-27 08:01,,PT_Normal,,,,,3OD+aJrJSauYycfYW3crmA,uQw8sRKoT0u10q61h5Pn4x,,,N,0,0,,,2007-02-01 02:41,2007-02-04 01:00,hbe4678,hbe4678,2007-08-02 08:00,2007-08-15 17:00,96
443,12456624,14517,6815898,13329,1,0,N,N,N,CP_Units,TT_Task,DT_FixedDUR2,RV_OK,TK_NotStart,CO01HE0130,"01H Power/Control JB's, Tray, Cable, Termination",,264.016666666667,0,384,0,0,0,384,0,0,0,,,,2007-09-10 08:01,2007-11-27 08:01,,2007-08-02 08:00,2007-10-10 17:00,2007-08-02 08:00,2007-10-10 17:00,2007-08-02 08:00,2007-10-10 17:00,,2007-09-10 08:01,2007-11-27 08:01,,PT_Normal,,,,,BjsZWCoVSb2/LH7AhKTrxg,tJ0vboLQikOQ08BGGvWwBR,,,N,0,0,,,2007-02-01 02:41,2007-02-04 01:00,hbe4678,hbe4678,2007-08-02 08:00,2007-10-10 17:00,384
444,12456625,14517,6815898,13329,1,0,N,N,N,CP_Units,TT_Task,DT_FixedDUR2,RV_OK,TK_NotStart,CO01GE0140,01G Install UPS in Control Building,,-64,48,144,0,0,0,144,0,0,0,,,,2007-07-16 08:00,2007-08-05 17:00,,2007-07-25 08:00,2007-08-14 17:00,2007-07-25 08:00,2007-08-14 17:00,2007-07-25 08:00,2007-08-14 17:00,,2007-07-16 08:00,2007-08-05 17:00,,PT_Normal,,,,,b6zBjL6cQtKJNnOxXlwMFw,37t4dUHfW065r8LifiFOvB,,,N,0,0,,,2007-02-01 02:41,2007-02-01 02:43,hbe4678,hbe4678,2007-07-25 08:00,2007-08-14 17:00,144
445,12456626,14517,6815898,13329,1,0,N,N,N,CP_Units,TT_Task,DT_FixedDUR2,RV_OK,TK_NotStart,CO01EE0110,"01E Lighting JB's, Stands, Tray & Cable",,1440.01666666667,0,288,0,0,0,288,0,0,0,,,,2008-02-09 08:01,2008-03-22 08:01,,2007-06-16 08:00,2007-07-26 17:00,2007-06-16 08:00,2007-07-26 17:00,2007-06-16 08:00,2007-07-26 17:00,,2008-02-09 08:01,2008-03-22 08:01,,PT_Normal,,,,,sFBHAokYSXGa1oWZIRXGXw,GLZYvVOeHEimZO9717BQth,,,N,0,0,,,2007-02-01 02:41,2007-02-04 01:00,hbe4678,hbe4678,2007-06-16 08:00,2007-07-26 17:00,288
446,12456627,14517,6815898,13329,1,0,N,N,N,CP_Units,TT_Task,DT_FixedDUR2,RV_OK,TK_NotStart,CO01EE0120,01E Lighting Fixture Installation/Termination,,1440.01666666667,0,144,0,0,0,144,0,0,0,,,,2008-03-22 08:01,2008-04-12 08:01,,2007-07-28 08:00,2007-08-16 17:00,2007-07-28 08:00,2007-08-16 17:00,2007-07-28 08:00,2007-08-16 17:00,,2008-03-22 08:01,2008-04-12 08:01,,PT_Normal,,,,,kmNUqpq8SgicQdjlZoyBZw,uZi2gwlH+EWbxsLsJg2vPB,,,N,0,0,,,2007-02-01 02:41,2007-02-04 01:00,hbe4678,hbe4678,2007-07-28 08:00,2007-08-16 17:00,144
447,12456628,14517,6815898,13329,1,0,N,N,N,CP_Units,TT_Task,DT_FixedDUR2,RV_OK,TK_NotStart,CO01YE0110,"01Y Lighting JB's, Stands, Tray & Cable",,1400.01666666667,0,288,0,0,0,288,0,0,0,,,,2008-02-09 08:01,2008-03-22 08:01,,2007-06-21 08:00,2007-08-01 17:00,2007-06-21 08:00,2007-08-01 17:00,2007-06-21 08:00,2007-08-01 17:00,,2008-02-09 08:01,2008-03-22 08:01,,PT_Normal,,,,,D8G9+aUsTC2VmpiwCpzH/Q,NtDPdHErGEKyuzojyIv0Th,,,N,0,0,,,2007-02-01 02:41,2007-02-04 01:00,hbe4678,hbe4678,2007-06-21 08:00,2007-08-01 17:00,288
448,12456629,14517,6815898,13329,1,0,N,N,N,CP_Units,TT_Task,DT_FixedDUR2,RV_OK,TK_NotStart,CO01YE0120,01Y Lighting Fixture Installation/Termination,,1400.01666666667,232,144,0,0,0,144,0,0,0,,,,2008-03-22 08:01,2008-04-12 08:01,,2007-08-02 08:00,2007-08-22 17:00,2007-08-02 08:00,2007-08-22 17:00,2007-08-02 08:00,2007-08-22 17:00,,2008-03-22 08:01,2008-04-12 08:01,,PT_Normal,,,,,I+bTvx7lTHaxVkh2Hhrmow,4iFgl1VPSkOFR674LEHPOx,,,N,0,0,,,2007-02-01 02:41,2007-02-04 01:00,hbe4678,hbe4678,2007-08-02 08:00,2007-08-22 17:00,144
449,12456630,14517,6815898,13329,1,0,N,N,N,CP_Units,TT_Task,DT_FixedDUR2,RV_OK,TK_NotStart,CO01YE0130,"01Y Power/Control JB's, Tray, Cable, Termination",,312,0,288,0,0,0,288,0,0,0,,,,2007-09-03 08:00,2007-11-05 17:00,,2007-07-19 08:00,2007-08-29 17:00,2007-07-19 08:00,2007-08-29 17:00,2007-07-19 08:00,2007-08-29 17:00,,2007-09-03 08:00,2007-11-05 17:00,,PT_Normal,,,,,QjYzSMy9QomC1H+cXNz+tg,pGFlqDKeOEewKwep8qiusB,,,N,0,0,,,2007-02-01 02:41,2007-02-01 02:43,hbe4678,hbe4678,2007-07-19 08:00,2007-08-29 17:00,288
450,12456631,14517,6815898,13329,1,0,N,N,N,CP_Units,TT_WBS,DT_FixedDUR2,RV_OK,TK_NotStart,WO010E0100,010 Above Ground Electrical,1343,1048.01666666667,3576,824,0,91932.04,91932.04,824,0,0,0,,,,2007-07-16 08:00,2008-04-12 08:01,,2007-06-16 08:00,2007-11-04 17:00,2007-06-16 08:00,2007-11-04 17:00,2007-06-16 08:00,2007-11-04 17:00,,2007-07-16 08:00,2008-04-12 08:01,,PT_Normal,,,,,KyAnsYjwTRCZgPWPKCcUow,tDO2QQPCukiLNt3QupMLJx,,,N,0,0,,,2007-02-01 02:41,2007-02-04 01:05,hbe4678,hbe4678,2007-06-16 08:00,2007-11-04 17:00,824
451,12456632,14517,6815898,13329,1,0,N,N,N,CP_Units,TT_Task,DT_FixedDUR2,RV_OK,TK_NotStart,CO01BE0110,"01B Lighting JB's, Stands, Tray & Cable",,840.016666666667,0,288,0,0,0,288,0,0,0,,,,2007-11-07 08:01,2007-12-25 08:01,,2007-06-16 08:00,2007-07-26 17:00,2007-06-16 08:00,2007-07-26 17:00,2007-06-16 08:00,2007-07-26 17:00,,2007-11-07 08:01,2007-12-25 08:01,,PT_Normal,,,,,FtDABJPPSZWrrNp1rlwOVw,oOZylEvtyk+U/mLXTEZq7h,,,N,0,0,,,2007-02-01 02:41,2007-02-04 01:00,hbe4678,hbe4678,2007-06-16 08:00,2007-07-26 17:00,288
452,12456633,14517,6815898,13329,1,0,N,N,N,CP_Units,TT_Task,DT_FixedDUR2,RV_OK,TK_NotStart,CO01BE0120,01B Lighting Fixture Installation/Termination,,840.016666666667,272,144,0,0,0,144,0,0,0,,,,2007-12-25 08:01,2008-01-15 08:01,,2007-07-28 08:00,2007-08-16 17:00,2007-07-28 08:00,2007-08-16 17:00,2007-07-28 08:00,2007-08-16 17:00,,2007-12-25 08:01,2008-01-15 08:01,,PT_Normal,,,,,kd/fx1bkS0uhe7bzrF77/g,1S5nOppl3UW+N/D2dvLMRR,,,N,0,0,,,2007-02-01 02:41,2007-02-04 01:00,hbe4678,hbe4678,2007-07-28 08:00,2007-08-16 17:00,144
453,12456634,14517,6815898,13329,1,0,N,N,N,CP_Units,TT_Task,DT_FixedDUR2,RV_OK,TK_NotStart,CO01BE0130,"01B Power/Control JB's, Tray, Cable, Termination",,256,0,544,0,0,0,544,0,0,0,,,,2007-09-02 08:00,2007-12-11 17:00,,2007-07-26 08:00,2007-11-04 17:00,2007-07-26 08:00,2007-11-04 17:00,2007-07-26 08:00,2007-11-04 17:00,,2007-09-02 08:00,2007-12-11 17:00,,PT_Normal,,,,,70X303qMTr64n4g1mRbaGw,GQiHQsVfV0GAISXoA/niSx,,,N,0,0,,,2007-02-01 02:41,2007-02-01 02:43,hbe4678,hbe4678,2007-07-26 08:00,2007-11-04 17:00,544
454,12456635,14517,6815898,13329,1,0,N,N,N,CP_Units,TT_Task,DT_FixedDUR2,RV_OK,TK_NotStart,CO01AE0110,"01A Lighting JB's, Stands, Tray & Cable",,728.016666666667,0,96,0,0,0,96,0,0,0,,,,2007-12-18 08:01,2008-01-07 08:01,,2007-08-12 08:00,2007-08-25 17:00,2007-08-12 08:00,2007-08-25 17:00,2007-08-12 08:00,2007-08-25 17:00,,2007-12-18 08:01,2008-01-07 08:01,,PT_Normal,,,,,Xr/9aH3IQ4W6t9hnVBG8FA,GrL8Tt4RIE6XO91i4NSQNB,,,N,0,0,,,2007-02-01 02:41,2007-02-04 01:00,hbe4678,hbe4678,2007-08-12 08:00,2007-08-25 17:00,96
455,12456636,14517,6815898,13329,1,0,N,N,N,CP_Units,TT_Task,DT_FixedDUR2,RV_OK,TK_NotStart,CO01AE0120,01A Lighting Fixture Installation/Termination,,728.016666666667,168,48,0,0,0,48,0,0,0,,,,2008-01-07 08:01,2008-01-14 08:01,,2007-08-26 08:00,2007-09-01 17:00,2007-08-26 08:00,2007-09-01 17:00,2007-08-26 08:00,2007-09-01 17:00,,2008-01-07 08:01,2008-01-14 08:01,,PT_Normal,,,,,22ksryx7RmCdu0RfSjdN3Q,wTozb5wF60mVucTlV2iLpx,,,N,0,0,,,2007-02-01 02:41,2007-02-04 01:00,hbe4678,hbe4678,2007-08-26 08:00,2007-09-01 17:00,48
456,12456637,14517,6815898,13329,1,0,N,N,N,CP_Units,TT_Task,DT_FixedDUR2,RV_OK,TK_NotStart,CO01AE0130,"01A Power/Control JB's, Tray, Cable, Termination",,528.016666666667,96,48,0,0,0,48,0,0,0,,,,2008-01-06 08:01,2008-01-13 08:01,,2007-10-03 08:00,2007-10-21 17:00,2007-10-03 08:00,2007-10-21 17:00,2007-10-03 08:00,2007-10-21 17:00,,2008-01-06 08:01,2008-01-13 08:01,,PT_Normal,,,,,QQSV1FkATKOy0aj1Hrz3jw,qh7Yr3bGDkaZ42nn9cu7Th,,,N,0,0,,,2007-02-01 02:41,2007-02-04 01:00,hbe4678,hbe4678,2007-10-03 08:00,2007-10-21 17:00,48
457,12456638,14517,6815898,13329,1,0,N,N,N,CP_Units,TT_Task,DT_FixedDUR2,RV_OK,TK_NotStart,CO01CE0110,"01C Lighting JB's, Stands, Tray & Cable",,992.016666666667,0,144,0,0,0,144,0,0,0,,,,2007-12-12 08:01,2008-01-08 08:01,,2007-06-28 08:00,2007-07-18 17:00,2007-06-28 08:00,2007-07-18 17:00,2007-06-28 08:00,2007-07-18 17:00,,2007-12-12 08:01,2008-01-08 08:01,,PT_Normal,,,,,3eBd2WsjQiOhXvYyMCLs5w,LMSYUXty9Eya+CaAZhA5hx,,,N,0,0,,,2007-02-01 02:41,2007-02-04 01:00,hbe4678,hbe4678,2007-06-28 08:00,2007-07-18 17:00,144
458,12456639,14517,6815898,13329,1,0,N,N,N,CP_Units,TT_Task,DT_FixedDUR2,RV_OK,TK_NotStart,CO01CE0120,01C Lighting Fixture Installation/Termination,,992.016666666667,424,48,0,0,0,48,0,0,0,,,,2008-01-08 08:01,2008-01-15 08:01,,2007-07-19 08:00,2007-07-25 17:00,2007-07-19 08:00,2007-07-25 17:00,2007-07-19 08:00,2007-07-25 17:00,,2008-01-08 08:01,2008-01-15 08:01,,PT_Normal,,,,,oVk727bhRTK85nrhbySMqA,hOR9PHPgqEW5ZgPnwYCowR,,,N,0,0,,,2007-02-01 02:41,2007-02-04 01:00,hbe4678,hbe4678,2007-07-19 08:00,2007-07-25 17:00,48
459,12456640,14517,6815898,13329,1,0,N,N,N,CP_Units,TT_Task,DT_FixedDUR2,RV_OK,TK_NotStart,CO01CE0130,"01C Power/Control JB's, Tray, Cable, Termination",,800,0,144,0,0,0,144,0,0,0,,,,2007-12-06 08:01,2008-01-02 08:01,,2007-07-21 08:01,2007-08-11 08:01,2007-07-21 08:01,2007-08-11 08:01,2007-07-21 08:01,2007-08-11 08:01,,2007-12-06 08:01,2008-01-02 08:01,,PT_Normal,,,,,N+7MYtD0Srufn4jIT7MdVQ,o1R1OtFZA0S5z8XksCtUCB,,,N,0,0,,,2007-02-01 02:41,2007-02-01 02:43,hbe4678,hbe4678,2007-07-21 08:01,2007-08-11 08:01,144
460,12456641,14517,6815898,13329,1,0,N,N,N,CP_Units,TT_Task,DT_FixedDUR2,RV_OK,TK_NotStart,CO01DE0110,"01D Lighting JB's, Stands, Tray & Cable",,528.016666666667,0,288,0,0,0,288,0,0,0,,,,2007-09-22 08:01,2007-11-20 08:01,,2007-07-02 08:00,2007-08-12 17:00,2007-07-02 08:00,2007-08-12 17:00,2007-07-02 08:00,2007-08-12 17:00,,2007-09-22 08:01,2007-11-20 08:01,,PT_Normal,,,,,2XP4j3JrRpGeoQjb4xIfeA,FdyFtOI3FUK5GKep3Ss1Jh,,,N,0,0,,,2007-02-01 02:41,2007-02-04 01:00,hbe4678,hbe4678,2007-07-02 08:00,2007-08-12 17:00,288
461,12456642,14517,6815898,13329,1,0,N,N,N,CP_Units,TT_Task,DT_FixedDUR2,RV_OK,TK_NotStart,CO01DE0120,01D Lighting Fixture Installation/Termination,,528.016666666667,160,144,0,0,0,144,0,0,0,,,,2007-11-20 08:01,2007-12-11 08:01,,2007-08-13 08:00,2007-09-02 17:00,2007-08-13 08:00,2007-09-02 17:00,2007-08-13 08:00,2007-09-02 17:00,,2007-11-20 08:01,2007-12-11 08:01,,PT_Normal,,,,,g57GNEblTiS+xWu04L5Z9A,Ji7x6NK2QECbvsYpAwk4GB,,,N,0,0,,,2007-02-01 02:41,2007-02-04 01:00,hbe4678,hbe4678,2007-08-13 08:00,2007-09-02 17:00,144
462,12456643,14517,6815898,13329,1,0,N,N,N,CP_Units,TT_Task,DT_FixedDUR2,RV_OK,TK_NotStart,CO01DE0130,"01D Power/Control JB's, Tray, Cable, Termination",,312.016666666667,0,432,0,0,0,432,0,0,0,,,,2007-09-10 08:01,2007-12-04 08:01,,2007-07-26 08:00,2007-10-10 17:00,2007-07-26 08:00,2007-10-10 17:00,2007-07-26 08:00,2007-10-10 17:00,,2007-09-10 08:01,2007-12-04 08:01,,PT_Normal,,,,,TqDNuYsgQ/6GdMm/ULuAcw,yjBdb9tmckKMjagoy7wMqR,,,N,0,0,,,2007-02-01 02:41,2007-02-04 01:00,hbe4678,hbe4678,2007-07-26 08:00,2007-10-10 17:00,432
463,12456644,14517,6815898,13329,1,0,N,N,N,CP_Units,TT_Task,DT_FixedDUR2,RV_OK,TK_NotStart,CO01FE0110,"01F Lighting JB's, Stands, Tray & Cable",,1216.01666666667,0,288,0,0,0,288,0,0,0,,,,2008-01-07 08:01,2008-02-18 08:01,,2007-06-16 08:00,2007-07-26 17:00,2007-06-16 08:00,2007-07-26 17:00,2007-06-16 08:00,2007-07-26 17:00,,2008-01-07 08:01,2008-02-18 08:01,,PT_Normal,,,,,SaEm8h/FQ8S/ZSPiErUo5Q,aE7nQ49W60evVuvKRnRvuh,,,N,0,0,,,2007-02-01 02:41,2007-02-04 01:00,hbe4678,hbe4678,2007-06-16 08:00,2007-07-26 17:00,288
464,12456645,14517,6815898,13329,1,0,N,N,N,CP_Units,TT_Task,DT_FixedDUR2,RV_OK,TK_NotStart,CO01FE0120,01F Lighting Fixture Installation/Termination,,1216.01666666667,0,144,0,0,0,144,0,0,0,,,,2008-02-18 08:01,2008-03-10 08:01,,2007-07-28 08:00,2007-08-16 17:00,2007-07-28 08:00,2007-08-16 17:00,2007-07-28 08:00,2007-08-16 17:00,,2008-02-18 08:01,2008-03-10 08:01,,PT_Normal,,,,,9nDD5QgCQ5qQtXf2N6dRKw,uQw8sRKoT0u10q61h5Pn4x,,,N,0,0,,,2007-02-01 02:41,2007-02-04 01:00,hbe4678,hbe4678,2007-07-28 08:00,2007-08-16 17:00,144
465,12456646,14517,6815898,13329,1,0,N,N,N,CP_Units,TT_Task,DT_FixedDUR2,RV_OK,TK_NotStart,CO01HE0140,01H Set Transformers TR-100/ 103/ 104/ 105,,264.016666666667,0,96,0,0,0,96,0,0,0,,,,2007-08-27 08:01,2007-09-10 08:01,,2007-07-19 08:00,2007-08-01 17:00,2007-07-19 08:00,2007-08-01 17:00,2007-07-19 08:00,2007-08-01 17:00,,2007-08-27 08:01,2007-09-10 08:01,,PT_Normal,,,,,wN+f+PssQRKCnVmNWVlP6A,6nJ+988a30yInGnOR4ltVR,,,N,0,0,,,2007-02-01 02:41,2007-02-04 01:00,hbe4678,hbe4678,2007-07-19 08:00,2007-08-01 17:00,96
466,12456647,14517,6815945,13332,1,0,N,N,N,CP_Units,TT_Task,DT_FixedDUR2,RV_OK,TK_NotStart,SC01AI0150,01A Function Testing,,-111.983333333333,0,8,0,0,0,8,0,0,0,,,,2008-01-14 08:01,2008-01-15 08:01,,2008-01-28 08:00,2008-01-28 17:00,2008-01-28 08:00,2008-01-28 17:00,2008-01-28 08:00,2008-01-28 17:00,,2008-01-14 08:01,2008-01-15 08:01,,PT_Normal,,,,,/XwdffeMT2KBmkNQLOO6fg,fqRreFzt70iILQ95E0WNNx,,,N,0,0,,,2007-02-01 02:41,2007-02-04 01:00,hbe4678,hbe4678,2008-01-28 08:00,2008-01-28 17:00,8
467,12456648,14517,6815945,13332,1,0,N,N,N,CP_Units,TT_Task,DT_FixedDUR2,RV_OK,TK_NotStart,SC01CI0150,01C Function Testing,,-111.983333333333,0,48,0,0,0,48,0,0,0,,,,2008-01-09 08:01,2008-01-15 08:01,,2008-01-23 08:00,2008-01-28 17:00,2008-01-23 08:00,2008-01-28 17:00,2008-01-23 08:00,2008-01-28 17:00,,2008-01-09 08:01,2008-01-15 08:01,,PT_Normal,,,,,D/MVbpNmS5iKT4mFH5LmFw,d/gs3mdUW0KY3LTSm/fpIx,,,N,0,0,,,2007-02-01 02:41,2007-02-04 01:00,hbe4678,hbe4678,2008-01-23 08:00,2008-01-28 17:00,48
468,12456649,14517,6815945,13332,1,0,N,N,N,CP_Units,TT_Task,DT_FixedDUR2,RV_OK,TK_NotStart,SC01DI0150,01D Function Testing,,-223.983333333333,0,144,0,0,0,144,0,0,0,,,,2007-12-14 08:01,2008-01-01 08:01,,2008-01-11 08:00,2008-01-28 17:00,2008-01-11 08:00,2008-01-28 17:00,2008-01-11 08:00,2008-01-28 17:00,,2007-12-14 08:01,2008-01-01 08:01,,PT_Normal,,,,,qoF/3iWJSSylZkCnbz0VgQ,1q3h4bR+okCBWmq4wPSNjR,,,N,0,0,,,2007-02-01 02:41,2007-02-04 01:00,hbe4678,hbe4678,2008-01-11 08:00,2008-01-28 17:00,144
469,12456650,14517,6815945,13332,1,0,N,N,N,CP_Units,TT_Task,DT_FixedDUR2,RV_OK,TK_NotStart,SC01YI0150,01Y Function Testing,,496.016666666667,0,144,0,0,0,144,0,0,0,,,,2008-03-25 08:01,2008-04-12 08:01,,2008-01-23 08:00,2008-02-09 17:00,2008-01-23 08:00,2008-02-09 17:00,2008-01-23 08:00,2008-02-09 17:00,,2008-03-25 08:01,2008-04-12 08:01,,PT_Normal,,,,,JhpXTUhfTceZKJ5/H7mY8g,X5aaRVjF6kO1+j4OOyIiVR,,,N,0,0,,,2007-02-01 02:41,2007-02-04 01:00,hbe4678,hbe4678,2008-01-23 08:00,2008-02-09 17:00,144
470,12456651,14517,6815945,13332,1,0,N,N,N,CP_Units,TT_Task,DT_FixedDUR2,RV_OK,TK_NotStart,SC01BI0150,01B Function Testing,,-279.983333333333,0,176,0,0,0,176,0,0,0,,,,2007-12-24 08:01,2008-01-15 08:01,,2008-01-28 08:00,2008-02-18 17:00,2008-01-28 08:00,2008-02-18 17:00,2008-01-28 08:00,2008-02-18 17:00,,2007-12-24 08:01,2008-01-15 08:01,,PT_Normal,,,,,sm3oqAqxRqibhHySwR8cVw,LrtojOk8OEyQKIkxiJMtSh,,,N,0,0,,,2007-02-01 02:41,2007-02-04 01:00,hbe4678,hbe4678,2008-01-28 08:00,2008-02-18 17:00,176
471,12456652,14517,6815899,13329,1,0,N,N,N,CP_Units,TT_Task,DT_FixedDUR2,RV_OK,TK_NotStart,CO01CI0120,"01C Instrument JB's, Field Instr, Tray, Cable",,800,895.983333333333,144,0,0,0,144,0,0,0,,,,2007-12-06 08:01,2008-01-02 08:01,,2007-07-21 08:01,2007-08-11 08:01,2007-07-21 08:01,2007-08-11 08:01,2007-07-21 08:01,2007-08-11 08:01,,2007-12-06 08:01,2008-01-02 08:01,,PT_Normal,,,,,fztEzC1sRjK4hQJXt/Wz9Q,SL5XS3gdDU6ge6K4J5pbkx,,,N,0,0,,,2007-02-01 02:41,2007-02-04 01:00,hbe4678,hbe4678,2007-07-21 08:01,2007-08-11 08:01,144
472,12456653,14517,6815899,13329,1,0,N,N,N,CP_Units,TT_Task,DT_FixedDUR2,RV_OK,TK_NotStart,CO01CI0130,01C Install In Line Instruments,,768,863.983333333333,24,0,0,0,24,0,0,0,,,,2007-12-29 08:01,2008-01-01 08:01,,2007-08-11 08:01,2007-08-14 08:01,2007-08-11 08:01,2007-08-14 08:01,2007-08-11 08:01,2007-08-14 08:01,,2007-12-29 08:01,2008-01-01 08:01,,PT_Normal,,,,,dGAk589nTtK4ZAPUuvH5kQ,9O/7ElraiEmcBNJECyIhuh,,,N,0,0,,,2007-02-01 02:41,2007-02-04 01:00,hbe4678,hbe4678,2007-08-11 08:01,2007-08-14 08:01,24
473,12456654,14517,6815899,13329,1,0,N,N,N,CP_Units,TT_Task,DT_FixedDUR2,RV_OK,TK_NotStart,CO01CI0140,01C Continuity Testing,,-95.9833333333333,0,24,0,0,0,24,0,0,0,,,,2008-01-06 08:01,2008-01-09 08:01,,2008-01-20 08:00,2008-01-22 17:00,2008-01-20 08:00,2008-01-22 17:00,2008-01-20 08:00,2008-01-22 17:00,,2008-01-06 08:01,2008-01-09 08:01,,PT_Normal,,,,,m8s5DwmPSXyKzS8Jglugew,Ksccb3UaRkS1s0tYAIRj0x,,,N,0,0,,,2007-02-01 02:41,2007-02-04 01:00,hbe4678,hbe4678,2008-01-20 08:00,2008-01-22 17:00,24
474,12456655,14517,6815899,13329,1,0,N,N,N,CP_Units,TT_Task,DT_FixedDUR2,RV_OK,TK_NotStart,CO01DI0120,"01D Instrument JB's, Field Instr, Tray, Cable",,312.016666666667,488,432,0,0,0,432,0,0,0,,,,2007-09-10 08:01,2007-12-04 08:01,,2007-07-26 08:00,2007-10-10 17:00,2007-07-26 08:00,2007-10-10 17:00,2007-07-26 08:00,2007-10-10 17:00,,2007-09-10 08:01,2007-12-04 08:01,,PT_Normal,,,,,VHPyR799Q3CsJHbv9GXyTg,O7lnocN3K0y2r0s4r1lCJR,,,N,0,0,,,2007-02-01 02:41,2007-02-04 01:00,hbe4678,hbe4678,2007-07-26 08:00,2007-10-10 17:00,432
475,12456656,14517,6815899,13329,1,0,N,N,N,CP_Units,TT_Task,DT_FixedDUR2,RV_OK,TK_NotStart,CO01DI0130,01D Install In Line Instruments,,328.016666666667,520,40,0,0,0,40,0,0,0,,,,2007-12-06 08:01,2007-12-12 08:01,,2007-10-20 08:00,2007-10-24 17:00,2007-10-20 08:00,2007-10-24 17:00,2007-10-20 08:00,2007-10-24 17:00,,2007-12-06 08:01,2007-12-12 08:01,,PT_Normal,,,,,A589zj8uRBCHNI3Qzg5y3w,gC37mh9ntUK9ggLvDqCHmx,,,N,0,0,,,2007-02-01 02:41,2007-02-04 01:00,hbe4678,hbe4678,2007-10-20 08:00,2007-10-24 17:00,40
476,12456657,14517,6815899,13329,1,0,N,N,N,CP_Units,TT_Task,DT_FixedDUR2,RV_OK,TK_NotStart,CO01DI0140,01D Continuity Testing,,-175.983333333333,0,40,0,0,0,40,0,0,0,,,,2007-12-05 08:01,2007-12-11 08:01,,2008-01-06 08:00,2008-01-10 17:00,2008-01-06 08:00,2008-01-10 17:00,2008-01-06 08:00,2008-01-10 17:00,,2007-12-05 08:01,2007-12-11 08:01,,PT_Normal,,,,,DHfqscO6TLCpwbkwU836lw,XOS7OoNQ+EqHBtqTElKDTB,,,N,0,0,,,2007-02-01 02:41,2007-02-04 01:00,hbe4678,hbe4678,2008-01-06 08:00,2008-01-10 17:00,40
477,12456658,14517,6815899,13329,1,0,N,N,N,CP_Units,TT_Task,DT_FixedDUR2,RV_OK,TK_NotStart,CO01GI0120,01G DCS Cable Terminations,,-280,0,384,0,0,0,384,0,0,0,,,,2007-09-03 08:00,2007-11-19 17:00,,2007-11-05 08:00,2008-01-05 17:00,2007-11-05 08:00,2008-01-05 17:00,2007-11-05 08:00,2008-01-05 17:00,,2007-09-03 08:00,2007-11-19 17:00,,PT_Normal,,,,,3WaZTIClSRC9MuQi4c4t1Q,fjrJ4tbjDkeIcvexqIJsgh,,,N,0,0,,,2007-02-01 02:41,2007-02-01 02:43,hbe4678,hbe4678,2007-11-05 08:00,2008-01-05 17:00,384
478,12456659,14517,6815899,13329,1,0,N,N,N,CP_Units,TT_Task,DT_FixedDUR2,RV_OK,TK_NotStart,CO01GI0150,01G Install DCS,,-112,56,384,0,0,0,384,0,0,0,,,,2007-07-09 08:00,2007-09-02 17:00,,2007-07-25 08:00,2007-09-24 17:00,2007-07-25 08:00,2007-09-24 17:00,2007-07-25 08:00,2007-09-24 17:00,,2007-07-09 08:00,2007-09-02 17:00,,PT_Normal,,,,,uQHlzZXaTWOjEQuf90CM4Q,SbSvQLHF80SKPcFL9kQ5Ah,,,N,0,0,,,2007-02-01 02:41,2007-02-04 01:00,hbe4678,hbe4678,2007-07-25 08:00,2007-09-24 17:00,384
479,12456660,14517,6815899,13329,1,0,N,N,N,CP_Units,TT_Task,DT_FixedDUR2,RV_OK,TK_NotStart,CO01YI0120,"01Y Instrument JB's, Field Instr, Tray, Cable",,312,592,288,0,0,0,288,0,0,0,,,,2007-09-03 08:00,2007-11-05 17:00,,2007-07-19 08:00,2007-08-29 17:00,2007-07-19 08:00,2007-08-29 17:00,2007-07-19 08:00,2007-08-29 17:00,,2007-09-03 08:00,2007-11-05 17:00,,PT_Normal,,,,,07+VUhL0SlmLhQ1E+K3VUA,5UDCqAhUBEq3uMQsh5Uyqx,,,N,0,0,,,2007-02-01 02:41,2007-02-01 02:43,hbe4678,hbe4678,2007-07-19 08:00,2007-08-29 17:00,288
480,12456661,14517,6815899,13329,1,0,N,N,N,CP_Units,TT_Task,DT_FixedDUR2,RV_OK,TK_NotStart,CO01YI0130,01Y Install In Line Instruments,,1112.01666666667,688,144,0,0,0,144,0,0,0,,,,2008-03-08 08:01,2008-03-29 08:01,,2007-08-30 08:00,2007-09-26 17:00,2007-08-30 08:00,2007-09-26 17:00,2007-08-30 08:00,2007-09-26 17:00,,2008-03-08 08:01,2008-03-29 08:01,,PT_Normal,,,,,ps+1iTKGSgW1wl2p/nEEuw,0/QxArDDXkKkHeTbjEmocR,,,N,0,0,,,2007-02-01 02:41,2007-02-04 01:00,hbe4678,hbe4678,2007-08-30 08:00,2007-09-26 17:00,144
481,12456662,14517,6815899,13329,1,0,N,N,N,CP_Units,TT_Task,DT_FixedDUR2,RV_OK,TK_NotStart,CO01YI0140,01Y Continuity Testing,,424.016666666667,0,144,0,0,0,144,0,0,0,,,,2008-03-15 08:01,2008-04-05 08:01,,2008-01-13 08:00,2008-02-02 17:00,2008-01-13 08:00,2008-02-02 17:00,2008-01-13 08:00,2008-02-02 17:00,,2008-03-15 08:01,2008-04-05 08:01,,PT_Normal,,,,,O3Xjs9/wR7mZNBTsf8Jk6g,EpcF/IGl+kSxdrZwRB4CLx,,,N,0,0,,,2007-02-01 02:41,2007-02-04 01:00,hbe4678,hbe4678,2008-01-13 08:00,2008-02-02 17:00,144
482,12456663,14517,6815899,13329,1,0,N,N,N,CP_Units,TT_Task,DT_FixedDUR2,RV_OK,TK_NotStart,CO01BI0120,"01B Instrument JB's, Field Instr, Tray, Cable",,256,488,544,0,0,0,544,0,0,0,,,,2007-09-02 08:00,2007-12-11 17:00,,2007-07-26 08:00,2007-11-04 17:00,2007-07-26 08:00,2007-11-04 17:00,2007-07-26 08:00,2007-11-04 17:00,,2007-09-02 08:00,2007-12-11 17:00,,PT_Normal,,,,,tuPnkTMUQHixTRWXCRmBww,wIwvd8Y4W0ycd0v9gzVFlB,,,N,0,0,,,2007-02-01 02:41,2007-02-01 02:43,hbe4678,hbe4678,2007-07-26 08:00,2007-11-04 17:00,544
483,12456664,14517,6815899,13329,1,0,N,N,N,CP_Units,TT_Task,DT_FixedDUR2,RV_OK,TK_NotStart,CO01BI0130,01B Install In Line Instruments,,296.016666666667,536,56,0,0,0,56,0,0,0,,,,2007-12-18 08:01,2008-01-01 08:01,,2007-11-05 08:00,2007-11-12 17:00,2007-11-05 08:00,2007-11-12 17:00,2007-11-05 08:00,2007-11-12 17:00,,2007-12-18 08:01,2008-01-01 08:01,,PT_Normal,,,,,Tlf/4Zf2T9yDAnQIq/rc6g,NjlNXx4IO06NEytX8aAfLx,,,N,0,0,,,2007-02-01 02:41,2007-02-04 01:00,hbe4678,hbe4678,2007-11-05 08:00,2007-11-12 17:00,56
484,12456665,14517,6815899,13329,1,0,N,N,N,CP_Units,TT_Task,DT_FixedDUR2,RV_OK,TK_NotStart,CO01BI0140,01B Continuity Testing,,-232,0,56,0,0,0,56,0,0,0,,,,2007-12-11 08:00,2007-12-18 17:00,,2008-01-20 08:00,2008-01-27 17:00,2008-01-20 08:00,2008-01-27 17:00,2008-01-20 08:00,2008-01-27 17:00,,2007-12-11 08:00,2007-12-18 17:00,,PT_Normal,,,,,HB8i23dZQQC2ZyC61ZzCgA,jSM8O1+eg0aG6UmL4Ahimh,,,N,0,0,,,2007-02-01 02:41,2007-02-01 02:43,hbe4678,hbe4678,2008-01-20 08:00,2008-01-27 17:00,56
485,12456666,14517,6815899,13329,1,0,N,N,N,CP_Units,TT_Task,DT_FixedDUR2,RV_OK,TK_NotStart,CO01AI0120,"01A Instrument JB's, Field Instr, Tray, Cable",,432.016666666667,528,48,0,0,0,48,0,0,0,,,,2008-01-06 08:01,2008-01-13 08:01,,2007-10-29 08:00,2007-11-04 17:00,2007-10-29 08:00,2007-11-04 17:00,2007-10-29 08:00,2007-11-04 17:00,,2008-01-06 08:01,2008-01-13 08:01,,PT_Normal,,,,,PtMnjEdWQkGUeW2r/LrjBQ,DCuSkplZqEuECW2mpzeVHx,,,N,0,0,,,2007-02-01 02:41,2007-02-04 01:00,hbe4678,hbe4678,2007-10-29 08:00,2007-11-04 17:00,48
486,12456667,14517,6815899,13329,1,0,N,N,N,CP_Units,TT_Task,DT_FixedDUR2,RV_OK,TK_NotStart,CO01AI0130,01A Install In Line Instruments,,456.016666666667,552,8,0,0,0,8,0,0,0,,,,2008-01-13 08:01,2008-01-14 08:01,,2007-11-01 08:00,2007-11-01 17:00,2007-11-01 08:00,2007-11-01 17:00,2007-11-01 08:00,2007-11-01 17:00,,2008-01-13 08:01,2008-01-14 08:01,,PT_Normal,,,,,STohF1TpSs2WhRUNbGtqsg,8jsAiNvUfE+1e81d4PL71h,,,N,0,0,,,2007-02-01 02:41,2007-02-04 01:00,hbe4678,hbe4678,2007-11-01 08:00,2007-11-01 17:00,8
487,12456668,14517,6815899,13329,1,0,N,N,N,CP_Units,TT_Task,DT_FixedDUR2,RV_OK,TK_NotStart,CO01AI0140,01A Continuity Testing,,-95.9833333333333,0,8,0,0,0,8,0,0,0,,,,2008-01-13 08:01,2008-01-14 08:01,,2008-01-27 08:00,2008-01-27 17:00,2008-01-27 08:00,2008-01-27 17:00,2008-01-27 08:00,2008-01-27 17:00,,2008-01-13 08:01,2008-01-14 08:01,,PT_Normal,,,,,h2pa+FRMTzmbjCKECCeYig,AUf/v7VFGUGjH47dEKpJCh,,,N,0,0,,,2007-02-01 02:41,2007-02-04 01:00,hbe4678,hbe4678,2008-01-27 08:00,2008-01-27 17:00,8
488,12456669,14517,6815899,13329,1,0,N,N,N,CP_Units,TT_WBS,DT_FixedDUR2,RV_OK,TK_NotStart,WO010I0100,010 Install Instruments & Test,1341,424.016666666667,3000,1168,0,5293.85,5293.85,1168,0,0,0,,,,2007-07-09 08:00,2008-04-05 08:01,,2007-07-19 08:00,2008-02-02 17:00,2007-07-19 08:00,2008-02-02 17:00,2007-07-19 08:00,2008-02-02 17:00,,2007-07-09 08:00,2008-04-05 08:01,,PT_Normal,,,,,g/FvhLG6Q4a1qjwEOUAEBg,gW89ZsnI/EeynjMejFTzIx,,,N,0,0,,,2007-02-01 02:41,2007-02-04 01:05,hbe4678,hbe4678,2007-07-19 08:00,2008-02-02 17:00,1168
489,12456670,14517,6815900,13329,1,0,N,N,N,CP_Units,TT_Task,DT_FixedDUR2,RV_OK,TK_NotStart,CO01AK0160,01A Install Liner at Evaporation Pond,1351,432.016666666667,0,240,0,4188,0,240,0,0,0,,,,2007-11-05 08:01,2007-12-10 08:01,,2007-08-12 08:00,2007-09-17 17:00,2007-08-12 08:00,2007-09-17 17:00,2007-08-12 08:00,2007-09-17 17:00,,2007-11-05 08:01,2007-12-10 08:01,,PT_Normal,,,,,kGNUmLmkTt2vj/ewJNGshw,sjr0kn0wgEyhpDKtTq2wrx,,,N,0,0,,,2007-02-01 02:41,2007-02-04 01:00,hbe4678,hbe4678,2007-08-12 08:00,2007-09-17 17:00,240
490,12456671,14517,6815900,13329,1,0,N,N,N,CP_Units,TT_Task,DT_FixedDUR2,RV_OK,TK_NotStart,CO01AK0150,01A Excavate Evaporation Pond,1351,432.016666666667,0,288,0,10067,0,288,0,0,0,2007-07-01 08:00,,,2007-09-02 08:01,2007-11-05 08:01,,2007-07-01 08:00,2007-08-11 17:00,2007-07-01 08:00,2007-08-11 17:00,2007-07-01 08:00,2007-08-11 17:00,,2007-09-02 08:01,2007-11-05 08:01,CS_MSOA,PT_Normal,,,,,zZfWDhLxSvO7E4ffKKWdVg,POjUf6cs0EKKcNmAT7vC2R,,,N,0,0,,,2007-02-01 02:41,2007-02-04 01:00,hbe4678,hbe4678,2007-07-01 08:00,2007-08-11 17:00,288
491,12456672,14517,6815900,13329,1,0,N,N,N,CP_Units,TT_Task,DT_FixedDUR2,RV_OK,TK_NotStart,CO010K0130,"010 Compl Roads, Ditches, Paving, & Rock Surfacing",1351,72.0166666666667,0,576,0,94115,0,528,0,0,0,2007-12-01 08:00,,,2007-12-11 08:01,2008-03-10 08:01,,2007-12-01 08:00,2008-02-27 17:00,2007-12-01 08:00,2008-02-27 17:00,2007-12-01 08:00,2008-02-20 17:00,,2007-12-11 08:01,2008-03-10 08:01,CS_MSOA,PT_Normal,,,,,NWeZ9ilqRFGnj44EXcjnhA,fOD9HIy9qU6YDb8a2W93Vx,,,N,0,0,,,2007-02-01 02:41,2007-02-04 01:00,hbe4678,hbe4678,2007-12-01 08:00,2008-02-27 17:00,576
492,12456673,14517,6815900,13329,1,0,N,N,N,CP_Units,TT_Task,DT_FixedDUR2,RV_OK,TK_NotStart,CO010K0140,010 Finish Grading,1351,296.016666666667,0,576,0,109990,0,576,0,0,0,2007-01-01 08:00,,,2008-01-19 08:01,2008-04-12 08:01,,2007-12-01 08:00,2008-02-27 17:00,2007-12-01 08:00,2008-02-27 17:00,2007-12-01 08:00,2008-02-27 17:00,,2008-01-19 08:01,2008-04-12 08:01,CS_MSOA,PT_Normal,,,,,Lk9rvsKDTkC59zG9FDSzAg,ll7o8rpA5EmHhf00yGFqvR,,,N,0,0,,,2007-02-01 02:41,2007-02-04 01:00,hbe4678,hbe4678,2007-12-01 08:00,2008-02-27 17:00,576
493,12456674,14517,6815900,13329,1,0,N,N,N,CP_Units,TT_WBS,DT_FixedDUR2,RV_OK,TK_NotStart,WO010K0100,010 Site Prep,1351,296.016666666667,2824,1472,0,87346.37,87346.37,1472,0,0,0,,,,2007-09-02 08:01,2008-04-12 08:01,,2007-07-01 08:00,2008-02-27 17:00,2007-07-01 08:00,2008-02-27 17:00,2007-07-01 08:00,2008-02-27 17:00,,2007-09-02 08:01,2008-04-12 08:01,,PT_Normal,,,,,UANFEvADQS6p75uCE6/1Cw,byr1hhM9EUyG6tSK/FZgNh,,,N,0,0,,,2007-02-01 02:41,2007-02-04 01:05,hbe4678,hbe4678,2007-07-01 08:00,2008-02-27 17:00,1472
494,12456675,14517,6815900,13329,1,0,N,N,N,CP_Units,TT_Task,DT_FixedDUR2,RV_OK,TK_NotStart,CO01JC0150,01K Excavate Pond,,440.016666666667,720,192,0,0,0,192,0,0,0,2007-04-01 08:00,,,2007-11-06 08:01,2007-12-04 08:01,,2007-08-12 08:00,2007-09-08 17:00,2007-08-12 08:00,2007-09-08 17:00,2007-08-12 08:00,2007-09-08 17:00,,2007-11-06 08:01,2007-12-04 08:01,CS_MSOA,PT_Normal,,,,,volU2UWUTPe8ZIX6m6Rtyw,u9kC8o7IQ8KHVLVuxgGbBw,,,N,0,0,,,2007-02-01 02:41,2007-02-04 01:00,hbe4678,hbe4678,2007-08-12 08:00,2007-09-08 17:00,192
495,12456676,14517,6815901,13329,1,0,N,N,N,CP_Units,TT_Task,DT_FixedDUR2,RV_OK,TK_NotStart,CO01BM0110,01B Set Static Equipment,,568,312,192,0,0,0,192,0,0,0,,,,2007-07-22 08:00,2007-08-18 17:00,,2007-04-30 08:00,2007-05-27 17:00,2007-04-30 08:00,2007-05-27 17:00,2007-04-30 08:00,2007-05-27 17:00,,2007-07-22 08:00,2007-08-18 17:00,,PT_Normal,,,,,97LORtfBRpW+bAGG3XhBjw,hcXpLUXBuky9xr9Ki70GxB,,,N,0,0,,,2007-02-01 02:41,2007-02-01 02:43,hbe4678,hbe4678,2007-04-30 08:00,2007-05-27 17:00,192
496,12456677,14517,6815901,13329,1,0,N,N,N,CP_Units,TT_Task,DT_FixedDUR2,RV_OK,TK_NotStart,CO01BM0150,01B Set Rotating Equipment,,256,0,288,0,0,0,288,0,0,0,,,,2007-07-08 08:00,2007-08-18 17:00,,2007-05-31 08:00,2007-07-11 17:00,2007-05-31 08:00,2007-07-11 17:00,2007-05-31 08:00,2007-07-11 17:00,,2007-07-08 08:00,2007-08-18 17:00,,PT_Normal,,,,,n26MHoW0Rjmfl+ECqE3RVA,a4sXmrbE8UWSkeFCfrfkFR,,,N,0,0,,,2007-02-01 02:41,2007-02-01 02:43,hbe4678,hbe4678,2007-05-31 08:00,2007-07-11 17:00,288
497,12456678,14517,6815901,13329,1,0,N,N,N,CP_Units,TT_Task,DT_FixedDUR2,RV_OK,TK_NotStart,CO01AM0150,01A Install Spray Devices,,432.016666666667,0,48,0,0,0,48,0,0,0,,,,2007-12-10 08:01,2007-12-17 08:01,,2007-09-19 08:00,2007-10-01 17:00,2007-09-19 08:00,2007-10-01 17:00,2007-09-19 08:00,2007-10-01 17:00,,2007-12-10 08:01,2007-12-17 08:01,,PT_Normal,,,,,3dlXU941ScKVaUI806+SwA,sk0i8uxx2USmyuxwOEZtmR,,,N,0,0,,,2007-02-01 02:41,2007-02-04 01:00,hbe4678,hbe4678,2007-09-19 08:00,2007-10-01 17:00,48
498,12456679,14517,6815901,13329,1,0,N,N,N,CP_Units,TT_WBS,DT_FixedDUR2,RV_OK,TK_Active,WO010M0100,010 Major Equipment,1347,432.016666666667,3720,1640,32923.5,56770.12,89693.62,2440,0,0,0,,2006-09-04 08:00,,2007-04-08 08:01,2007-12-17 08:01,,2007-01-27 08:00,2007-10-01 17:00,2007-01-27 08:00,2007-10-01 17:00,2006-09-04 08:00,2007-10-01 17:00,,2007-04-08 08:01,2007-12-17 08:01,,PT_Normal,,,,,BuJhgtHwS0ilBgcHcrawKA,3WYhW0FueEe5eBsTEF/S0x,,,N,0,0,,,2007-02-01 02:41,2007-02-04 01:05,hbe4678,hbe4678,2007-01-27 08:00,2007-10-01 17:00,1640
499,12456680,14517,6815901,13329,1,0,N,N,N,CP_Units,TT_Task,DT_FixedDUR2,RV_OK,TK_NotStart,CO01CM0110,01C Set Static Equipment - EDR Equipment,,744,0,384,0,0,0,384,0,0,0,,,,2007-08-21 08:01,2007-11-07 08:01,,2007-05-05 08:01,2007-06-30 08:01,2007-05-05 08:01,2007-06-30 08:01,2007-05-05 08:01,2007-06-30 08:01,,2007-08-21 08:01,2007-11-07 08:01,,PT_Normal,,,,,LntSH6ZPTimk+7bOo6+wnw,h4uXUFRAkEis+S2dcJ+7dR,,,N,0,0,,,2007-02-01 02:41,2007-02-01 02:43,hbe4678,hbe4678,2007-05-05 08:01,2007-06-30 08:01,384
500,12456681,14517,6815901,13329,1,0,N,N,N,CP_Units,TT_Task,DT_FixedDUR2,RV_OK,TK_NotStart,CO01DM0110,01D Set Static Equipment,,392.016666666667,120,288,0,0,0,288,0,0,0,,,,2007-07-10 08:01,2007-08-21 08:01,,2007-05-14 08:00,2007-06-24 17:00,2007-05-14 08:00,2007-06-24 17:00,2007-05-14 08:00,2007-06-24 17:00,,2007-07-10 08:01,2007-08-21 08:01,,PT_Normal,,,,,CI3iUO7RRCyX14Eb5nBD4g,9WxfkH1t+E+88jJnwp7kBh,,,N,0,0,,,2007-02-01 02:41,2007-02-04 01:00,hbe4678,hbe4678,2007-05-14 08:00,2007-06-24 17:00,288
501,12456682,14517,6815901,13329,1,0,N,N,N,CP_Units,TT_Task,DT_FixedDUR2,RV_OK,TK_NotStart,CO01DM0150,01D Set Rotating Equipment,,272.016666666667,0,288,0,0,0,288,0,0,0,,,,2007-07-10 08:01,2007-08-21 08:01,,2007-05-31 08:00,2007-07-11 17:00,2007-05-31 08:00,2007-07-11 17:00,2007-05-31 08:00,2007-07-11 17:00,,2007-07-10 08:01,2007-08-21 08:01,,PT_Normal,,,,,3o+LLtwySeClOzKDxdUerg,mhZBThI63kecuC+HM+zU7R,,,N,0,0,,,2007-02-01 02:41,2007-02-04 01:00,hbe4678,hbe4678,2007-05-31 08:00,2007-07-11 17:00,288
502,12456683,14517,6815901,13329,1,0,N,N,N,CP_Units,TT_Task,DT_FixedDUR2,RV_OK,TK_Active,CO01DM0130,01D Erect 2101-U Cooling Tower,,488.016666666667,0,880,0,0,0,992,0,0,0,,2006-09-04 08:00,,2007-04-08 08:01,2007-08-14 08:01,2007-06-03 17:00,2007-01-27 08:00,2007-06-03 17:00,2007-01-27 08:00,2007-06-03 17:00,2006-09-04 08:00,2007-02-22 17:00,,2007-04-08 08:01,2007-08-14 08:01,,PT_Normal,,,,,vVyrqKiNTneCr4BBDpkb4g,7vw8KkvBG0eJJkW5cC6+aR,,,N,0,0,,,2007-02-01 02:41,2007-02-04 01:00,hbe4678,hbe4678,2007-01-27 08:00,2007-06-03 17:00,880
503,12456684,14517,6815901,13329,1,0,N,N,N,CP_Units,TT_Task,DT_FixedDUR2,RV_OK,TK_NotStart,CO01HM0110,01H Set Static Equipment - 2303-J Emergency Pwr Gen.,,688,423.983333333333,288,0,0,0,288,0,0,0,,,,2007-08-27 08:01,2007-10-30 08:01,,2007-05-19 08:01,2007-06-30 08:01,2007-05-19 08:01,2007-06-30 08:01,2007-05-19 08:01,2007-06-30 08:01,,2007-08-27 08:01,2007-10-30 08:01,,PT_Normal,,,,,mszeDKUUTXSgnDDw/SHWHg,Njubv5axF0iOqJhsn1DLiR,,,N,0,0,,,2007-02-01 02:41,2007-02-04 01:00,hbe4678,hbe4678,2007-05-19 08:01,2007-06-30 08:01,288
504,12456685,14517,6815901,13329,1,0,N,N,N,CP_Units,TT_Task,DT_FixedDUR2,RV_OK,TK_NotStart,CO01CM0115,01C Set Rotating Equipment - EDR Equipment,,792,48,384,0,0,0,384,0,0,0,,,,2007-08-28 08:01,2007-11-14 08:01,,2007-05-05 08:01,2007-06-30 08:01,2007-05-05 08:01,2007-06-30 08:01,2007-05-05 08:01,2007-06-30 08:01,,2007-08-28 08:01,2007-11-14 08:01,,PT_Normal,,,,,WOBAgOuuSEGMOy59igGsig,wIK0FtlmQLmACjSLs0+S5w,,,N,0,0,,,2007-02-01 02:41,2007-02-01 02:43,hbe4678,hbe4678,2007-05-05 08:01,2007-06-30 08:01,384
505,12456686,14517,6815902,13329,1,0,N,N,N,CP_Units,TT_Task,DT_FixedDUR2,RV_OK,TK_NotStart,CO01CP0130,01C LB Pipe Erection,,744,0,144,0,0,0,144,0,0,0,,,,2007-11-14 08:01,2007-12-05 08:01,,2007-07-07 08:01,2007-07-28 08:01,2007-07-07 08:01,2007-07-28 08:01,2007-07-07 08:01,2007-07-28 08:01,,2007-11-14 08:01,2007-12-05 08:01,,PT_Normal,,,,,8TwPrmLmQbm73H1o4idJbA,yqwPT14e70CKUzgzjOfOHR,,,N,0,0,,,2007-02-01 02:41,2007-02-01 02:43,hbe4678,hbe4678,2007-07-07 08:01,2007-07-28 08:01,144
506,12456687,14517,6815902,13329,1,0,N,N,N,CP_Units,TT_Task,DT_FixedDUR2,RV_OK,TK_NotStart,CO01CP0140,01C SB Pipe Erection,,744,0,144,0,0,0,144,0,0,0,,,,2007-11-21 08:01,2007-12-12 08:01,,2007-07-14 08:01,2007-08-04 08:01,2007-07-14 08:01,2007-08-04 08:01,2007-07-14 08:01,2007-08-04 08:01,,2007-11-21 08:01,2007-12-12 08:01,,PT_Normal,,,,,MITkZKV+RkmK4YrLaYyzWQ,nlRpP4HNfEW7CkUsiwAPDB,,,N,0,0,,,2007-02-01 02:41,2007-02-01 02:43,hbe4678,hbe4678,2007-07-14 08:01,2007-08-04 08:01,144
507,12456688,14517,6815902,13329,1,0,N,N,N,CP_Units,TT_Task,DT_FixedDUR2,RV_OK,TK_NotStart,CO01CP0150,01C Punchlist / Test Piping,,768,0,72,0,0,0,72,0,0,0,,,,2007-12-12 08:01,2007-12-29 08:01,,2007-07-31 08:01,2007-08-11 08:01,2007-07-31 08:01,2007-08-11 08:01,2007-07-31 08:01,2007-08-11 08:01,,2007-12-12 08:01,2007-12-29 08:01,,PT_Normal,,,,,QN6mW+/0TeO57vhUBK+oeg,O2J2WZhUo0S3l3d3HzX/rB,,,N,0,0,,,2007-02-01 02:41,2007-02-01 02:43,hbe4678,hbe4678,2007-07-31 08:01,2007-08-11 08:01,72
508,12456689,14517,6815902,13329,1,0,N,N,N,CP_Units,TT_Task,DT_FixedDUR2,RV_OK,TK_NotStart,CO01DP0130,01D LB Pipe Erection,,272.016666666667,0,432,0,0,0,432,0,0,0,,,,2007-08-21 08:01,2007-11-14 08:01,,2007-07-12 08:00,2007-09-12 17:00,2007-07-12 08:00,2007-09-12 17:00,2007-07-12 08:00,2007-09-12 17:00,,2007-08-21 08:01,2007-11-14 08:01,,PT_Normal,,,,,40o5nO8AQVei29luMc6xxg,OV+D5oJpREC7oHkJZZEuox,,,N,0,0,,,2007-02-01 02:41,2007-02-04 01:00,hbe4678,hbe4678,2007-07-12 08:00,2007-09-12 17:00,432
509,12456690,14517,6815902,13329,1,0,N,N,N,CP_Units,TT_Task,DT_FixedDUR2,RV_OK,TK_NotStart,CO01DP0140,01D SB Pipe Erection,,272.016666666667,0,432,0,0,0,432,0,0,0,,,,2007-08-28 08:01,2007-11-21 08:01,,2007-07-19 08:00,2007-09-26 17:00,2007-07-19 08:00,2007-09-26 17:00,2007-07-19 08:00,2007-09-26 17:00,,2007-08-28 08:01,2007-11-21 08:01,,PT_Normal,,,,,f5mDShbXRWq+hnLDq8wcfA,dIUjVBHMzE2SxsI5XEGnVh,,,N,0,0,,,2007-02-01 02:41,2007-02-04 01:00,hbe4678,hbe4678,2007-07-19 08:00,2007-09-26 17:00,432
510,12456691,14517,6815902,13329,1,0,N,N,N,CP_Units,TT_Task,DT_FixedDUR2,RV_OK,TK_NotStart,CO01DP0150,01D Punchlist / Test Piping,,272.016666666667,0,216,0,0,0,216,0,0,0,,,,2007-10-28 08:01,2007-11-28 08:01,,2007-08-27 08:00,2007-10-10 17:00,2007-08-27 08:00,2007-10-10 17:00,2007-08-27 08:00,2007-10-10 17:00,,2007-10-28 08:01,2007-11-28 08:01,,PT_Normal,,,,,I/pYOHUfQwWZ1fCwwKTASw,88pGylO2vEW/3pChRXDzHx,,,N,0,0,,,2007-02-01 02:41,2007-02-04 01:00,hbe4678,hbe4678,2007-08-27 08:00,2007-10-10 17:00,216
511,12456692,14517,6815902,13329,1,0,N,N,N,CP_Units,TT_Task,DT_FixedDUR2,RV_OK,TK_NotStart,CO01YP0130,01Y LB Pipe Erection - Pipe Rack,,312,0,384,0,0,0,384,0,0,0,,,,2007-07-16 08:00,2007-09-09 17:00,,2007-05-31 08:00,2007-07-25 17:00,2007-05-31 08:00,2007-07-25 17:00,2007-05-31 08:00,2007-07-25 17:00,,2007-07-16 08:00,2007-09-09 17:00,,PT_Normal,,,,,LutU4JH9SC2e8TGPHzH32w,p5esPpHkpEex2rNIXimpIR,,,N,0,0,,,2007-02-01 02:41,2007-02-01 02:43,hbe4678,hbe4678,2007-05-31 08:00,2007-07-25 17:00,384
512,12456693,14517,6815902,13329,1,0,N,N,N,CP_Units,TT_Task,DT_FixedDUR2,RV_OK,TK_NotStart,CO01YP0140,01Y SB Pipe Erection - Pipe Rack,,312,0,384,0,0,0,384,0,0,0,,,,2007-08-13 08:00,2007-10-29 17:00,,2007-06-28 08:00,2007-08-22 17:00,2007-06-28 08:00,2007-08-22 17:00,2007-06-28 08:00,2007-08-22 17:00,,2007-08-13 08:00,2007-10-29 17:00,,PT_Normal,,,,,f+xrzjrcSM6+cf7h38H56g,p9iAKWpmpUehegYc1RCNHR,,,N,0,0,,,2007-02-01 02:41,2007-02-01 02:43,hbe4678,hbe4678,2007-06-28 08:00,2007-08-22 17:00,384
513,12456694,14517,6815902,13329,1,0,N,N,N,CP_Units,TT_Task,DT_FixedDUR2,RV_OK,TK_NotStart,CO01YP0150,01Y Punchlist / Test Piping - Pipe Rack,,1064.01666666667,0,192,0,0,0,192,0,0,0,,,,2008-02-02 08:01,2008-03-01 08:01,,2007-08-02 08:00,2007-08-29 17:00,2007-08-02 08:00,2007-08-29 17:00,2007-08-02 08:00,2007-08-29 17:00,,2008-02-02 08:01,2008-03-01 08:01,,PT_Normal,,,,,ceKL9lcrTxGBrN9eLRwaUA,T6DWTB/Dk0qIG9aBbLbqhB,,,N,0,0,,,2007-02-01 02:41,2007-02-04 01:00,hbe4678,hbe4678,2007-08-02 08:00,2007-08-29 17:00,192
514,12456695,14517,6815902,13329,1,0,N,N,N,CP_Units,TT_Task,DT_FixedDUR2,RV_OK,TK_NotStart,CO01BP0130,01B LB Pipe Erection,,256,0,544,0,0,0,544,0,0,0,,,,2007-08-19 08:00,2007-11-27 17:00,,2007-07-12 08:00,2007-10-21 17:00,2007-07-12 08:00,2007-10-21 17:00,2007-07-12 08:00,2007-10-21 17:00,,2007-08-19 08:00,2007-11-27 17:00,,PT_Normal,,,,,AbYnasmZRN2wCrbGMtCncw,b2nV6zKuBEy9IBNaiJyfeh,,,N,0,0,,,2007-02-01 02:41,2007-02-01 02:43,hbe4678,hbe4678,2007-07-12 08:00,2007-10-21 17:00,544
515,12456696,14517,6815902,13329,1,0,N,N,N,CP_Units,TT_Task,DT_FixedDUR2,RV_OK,TK_NotStart,CO01BP0140,01B SB Pipe Erection,,256,0,544,0,0,0,544,0,0,0,,,,2007-08-26 08:00,2007-12-04 17:00,,2007-07-19 08:00,2007-10-28 17:00,2007-07-19 08:00,2007-10-28 17:00,2007-07-19 08:00,2007-10-28 17:00,,2007-08-26 08:00,2007-12-04 17:00,,PT_Normal,,,,,N8c4HBJ+QqSB5Dr20GTd3Q,yculZm2XJk+NkzG8mhPaQh,,,N,0,0,,,2007-02-01 02:41,2007-02-01 02:43,hbe4678,hbe4678,2007-07-19 08:00,2007-10-28 17:00,544
516,12456697,14517,6815902,13329,1,0,N,N,N,CP_Units,TT_Task,DT_FixedDUR2,RV_OK,TK_NotStart,CO01BP0150,01B Punchlist / Test Piping,,256.016666666667,0,272,0,0,0,272,0,0,0,,,,2007-11-03 08:01,2007-12-12 08:01,,2007-09-04 08:00,2007-11-04 17:00,2007-09-04 08:00,2007-11-04 17:00,2007-09-04 08:00,2007-11-04 17:00,,2007-11-03 08:01,2007-12-12 08:01,,PT_Normal,,,,,5tYkCp4aSW6LLvBxrq8Mcw,ti1cuvp0bkiJCJFphOuQph,,,N,0,0,,,2007-02-01 02:41,2007-02-04 01:00,hbe4678,hbe4678,2007-09-04 08:00,2007-11-04 17:00,272
517,12456698,14517,6815902,13329,1,0,N,N,N,CP_Units,TT_Task,DT_FixedDUR2,RV_OK,TK_NotStart,CO01AP0130,01A LB Pipe Erection,,432.016666666667,0,96,0,0,0,96,0,0,0,,,,2007-12-17 08:01,2008-01-06 08:01,,2007-10-03 08:00,2007-10-28 17:00,2007-10-03 08:00,2007-10-28 17:00,2007-10-03 08:00,2007-10-28 17:00,,2007-12-17 08:01,2008-01-06 08:01,,PT_Normal,,,,,W1AZxlUFTZKVEsMVsbm3qA,N5FNFLevEk24kWtZoQ7vmB,,,N,0,0,,,2007-02-01 02:41,2007-02-04 01:00,hbe4678,hbe4678,2007-10-03 08:00,2007-10-28 17:00,96
518,12456699,14517,6815902,13329,1,0,N,N,N,CP_Units,TT_Task,DT_FixedDUR2,RV_OK,TK_NotStart,CO01AP0150,01A Punchlist / Test Piping,,456.016666666667,0,24,0,0,0,24,0,0,0,,,,2008-01-09 08:01,2008-01-13 08:01,,2007-10-29 08:00,2007-10-31 17:00,2007-10-29 08:00,2007-10-31 17:00,2007-10-29 08:00,2007-10-31 17:00,,2008-01-09 08:01,2008-01-13 08:01,,PT_Normal,,,,,kLU4dr9aSpGRhu6Tn2pmvA,4ZjWF25RqECBjeGV4Aygxx,,,N,0,0,,,2007-02-01 02:41,2007-02-04 01:00,hbe4678,hbe4678,2007-10-29 08:00,2007-10-31 17:00,24
519,12456700,14517,6815902,13329,1,0,N,N,N,CP_Units,TT_WBS,DT_FixedDUR2,RV_OK,TK_NotStart,WO010P0100,010 Above Ground Pipe,1342,760.016666666667,3576,928,0,139792.57,139792.57,928,0,0,0,,,,2007-07-16 08:00,2008-03-01 08:01,,2007-05-31 08:00,2007-11-04 17:00,2007-05-31 08:00,2007-11-04 17:00,2007-05-31 08:00,2007-11-04 17:00,,2007-07-16 08:00,2008-03-01 08:01,,PT_Normal,,,,,vCiduoYaTKKpbjyjSIl9kg,nY1fO86ark6Kip5AvrwyIR,,,N,0,0,,,2007-02-01 02:41,2007-02-04 01:05,hbe4678,hbe4678,2007-05-31 08:00,2007-11-04 17:00,928
520,12456701,14517,6815904,13329,1,0,N,N,N,CP_Units,TT_Task,DT_FixedDUR2,RV_OK,TK_NotStart,CO01YS0110,01Y Erect Structural Steel -  Pipe Rack,,312,0,384,0,0,0,384,0,0,0,,,,2007-05-21 08:00,2007-07-15 17:00,,2007-04-05 08:00,2007-05-30 17:00,2007-04-05 08:00,2007-05-30 17:00,2007-04-05 08:00,2007-05-30 17:00,,2007-05-21 08:00,2007-07-15 17:00,,PT_Normal,,,,,8iEKiSwVQbi/D/PSioZFCg,HVJaiN7z4USP5MtfIxab9B,,,N,0,0,,,2007-02-01 02:41,2007-02-01 02:43,hbe4678,hbe4678,2007-04-05 08:00,2007-05-30 17:00,384
521,12456702,14517,6815904,13329,1,0,N,N,N,CP_Units,TT_Task,DT_FixedDUR2,RV_OK,TK_NotStart,CO01YS0120,01Y Erect Misc Steel - Pipe Rack,,312,0,192,0,0,0,192,0,0,0,,,,2007-07-09 08:00,2007-08-05 17:00,,2007-05-24 08:00,2007-06-20 17:00,2007-05-24 08:00,2007-06-20 17:00,2007-05-24 08:00,2007-06-20 17:00,,2007-07-09 08:00,2007-08-05 17:00,,PT_Normal,,,,,KTsWXQ00SNimWoreAVoNtQ,tyhAlmFnLE2bMFMoZl2S/B,,,N,0,0,,,2007-02-01 02:41,2007-02-01 02:43,hbe4678,hbe4678,2007-05-24 08:00,2007-06-20 17:00,192
522,12456703,14517,6815904,13329,1,0,N,N,N,CP_Units,TT_Task,DT_FixedDUR2,RV_OK,TK_NotStart,CO01BS0120,01B Erect Misc Steel,,688,104,192,0,0,0,192,0,0,0,,,,2007-08-12 08:00,2007-09-08 17:00,,2007-05-03 08:00,2007-05-30 17:00,2007-05-03 08:00,2007-05-30 17:00,2007-05-03 08:00,2007-05-30 17:00,,2007-08-12 08:00,2007-09-08 17:00,,PT_Normal,,,,,MyTTxta8QP2nNkwkIPprdw,k4w+gqnSVkqfyO+rWrOyyh,,,N,0,0,,,2007-02-01 02:41,2007-02-01 02:43,hbe4678,hbe4678,2007-05-03 08:00,2007-05-30 17:00,192
523,12456704,14517,6815904,13329,1,0,N,N,N,CP_Units,TT_WBS,DT_FixedDUR2,RV_OK,TK_NotStart,WO010S0100,010 Erect Steel,1353,752.016666666667,4216,672,0,11502.27,11502.27,672,0,0,0,,,,2007-05-21 08:00,2007-11-21 08:01,,2007-04-05 08:00,2007-07-11 17:00,2007-04-05 08:00,2007-07-11 17:00,2007-04-05 08:00,2007-07-11 17:00,,2007-05-21 08:00,2007-11-21 08:01,,PT_Normal,,,,,L7xqT0GcTkq6Ny0dMijKGQ,n78e46A3AEOXbv7EAYdnqh,,,N,0,0,,,2007-02-01 02:41,2007-02-04 01:05,hbe4678,hbe4678,2007-04-05 08:00,2007-07-11 17:00,672
524,12456705,14517,6815904,13329,1,0,N,N,N,CP_Units,TT_Task,DT_FixedDUR2,RV_OK,TK_NotStart,CO01CS0120,01C Erect Misc Steel,,848.016666666667,0,96,0,0,0,96,0,0,0,,,,2007-11-07 08:01,2007-11-21 08:01,,2007-06-14 08:00,2007-06-27 17:00,2007-06-14 08:00,2007-06-27 17:00,2007-06-14 08:00,2007-06-27 17:00,,2007-11-07 08:01,2007-11-21 08:01,,PT_Normal,,,,,yEAMiQQLQoOygfhCVg+/Og,1h5mInagBUS5GltZFNnB/B,,,N,0,0,,,2007-02-01 02:41,2007-02-04 01:00,hbe4678,hbe4678,2007-06-14 08:00,2007-06-27 17:00,96
525,12456706,14517,6815904,13329,1,0,N,N,N,CP_Units,TT_Task,DT_FixedDUR2,RV_OK,TK_NotStart,CO01DS0120,01D Erect Misc Steel,,488.016666666667,0,192,0,0,0,192,0,0,0,,,,2007-08-14 08:01,2007-09-11 08:01,,2007-06-04 08:00,2007-07-01 17:00,2007-06-04 08:00,2007-07-01 17:00,2007-06-04 08:00,2007-07-01 17:00,,2007-08-14 08:01,2007-09-11 08:01,,PT_Normal,,,,,V6Yzz6+LRnK3a8Ysu6kyIg,ew69bPkckE2o2vIg70Zfqh,,,N,0,0,,,2007-02-01 02:41,2007-02-04 01:00,hbe4678,hbe4678,2007-06-04 08:00,2007-07-01 17:00,192
526,12456707,14517,6815904,13329,1,0,N,N,N,CP_Units,TT_Task,DT_FixedDUR2,RV_OK,TK_NotStart,CO01HS0110,01H Erect Structural Steel -  Stairs & Platform,,408.016666666667,0,192,0,0,0,192,0,0,0,,,,2007-08-13 08:01,2007-09-10 08:01,,2007-06-14 08:00,2007-07-11 17:00,2007-06-14 08:00,2007-07-11 17:00,2007-06-14 08:00,2007-07-11 17:00,,2007-08-13 08:01,2007-09-10 08:01,,PT_Normal,,,,,FMXUC9AJQbWsiSfFHeafrw,a14efYGFT0ulkqU7xfzpDh,,,N,0,0,,,2007-02-01 02:41,2007-02-04 01:00,hbe4678,hbe4678,2007-06-14 08:00,2007-07-11 17:00,192
527,12456708,14517,6815905,13329,0,0,N,N,N,CP_Units,TT_FinMile,DT_FixedDUR2,RV_OK,TK_NotStart,CO01CT0110,01C Mechanical Completion,,-55.9833333333333,40,0,0,0,0,0,0,0,0,,,,2008-01-15 08:01,2008-01-15 08:01,,2008-01-22 17:00,2008-01-22 17:00,2008-01-22 17:00,2008-01-22 17:00,2008-01-22 17:00,2008-01-22 17:00,,2008-01-15 08:01,2008-01-15 08:01,,PT_Normal,,,,,QwjMAh0PRG+XDOynaO8V4g,NyXNW4hjbU+UMn0Jd9UQzh,,,N,0,0,,,2007-02-01 02:41,2007-02-04 01:00,hbe4678,hbe4678,2008-01-22 17:00,2008-01-22 17:00,0
528,12456709,14517,6815905,13332,0,0,N,N,N,CP_Units,TT_FinMile,DT_FixedDUR2,RV_OK,TK_NotStart,SC01CT0120,01C RFSU,,-111.983333333333,264,0,0,0,0,0,0,0,0,,,,2008-01-15 08:01,2008-01-15 08:01,,2008-01-28 17:00,2008-01-28 17:00,2008-01-28 17:00,2008-01-28 17:00,2008-01-28 17:00,2008-01-28 17:00,,2008-01-15 08:01,2008-01-15 08:01,,PT_Normal,,,,,vNtZZDTRTN2YlxfZitayZw,bjLvx5bYrEW6XYolBKZdch,,,N,0,0,,,2007-02-01 02:41,2007-02-04 01:00,hbe4678,hbe4678,2008-01-28 17:00,2008-01-28 17:00,0
529,12456710,14517,6815905,13329,0,0,N,N,N,CP_Units,TT_FinMile,DT_FixedDUR2,RV_OK,TK_NotStart,CO01DT0110,01D Mechanical Completion,,-175.983333333333,104,0,0,0,0,0,0,0,0,,,,2007-12-11 08:01,2007-12-11 08:01,,2008-01-10 17:00,2008-01-10 17:00,2008-01-10 17:00,2008-01-10 17:00,2008-01-10 17:00,2008-01-10 17:00,,2007-12-11 08:01,2007-12-11 08:01,,PT_Normal,,,,,Yua5nlSWQzmXkBtc/goLOA,753EUlBQbkOImKY/H3yZux,,,N,0,0,,,2007-02-01 02:41,2007-02-04 01:00,hbe4678,hbe4678,2008-01-10 17:00,2008-01-10 17:00,0
530,12456711,14517,6815905,13332,0,0,N,N,N,CP_Units,TT_FinMile,DT_FixedDUR2,RV_OK,TK_NotStart,SC01DT0120,01D RFSU,,-223.983333333333,152,0,0,0,0,0,0,0,0,,,,2008-01-01 08:01,2008-01-01 08:01,,2008-01-28 17:00,2008-01-28 17:00,2008-01-28 17:00,2008-01-28 17:00,2008-01-28 17:00,2008-01-28 17:00,,2008-01-01 08:01,2008-01-01 08:01,,PT_Normal,,,,,STfr8Ex+SBGcWoMz1qgllw,DOr/+uf/30ewRwKYFnbEwB,,,N,0,0,,,2007-02-01 02:41,2007-02-04 01:00,hbe4678,hbe4678,2008-01-28 17:00,2008-01-28 17:00,0
531,12456712,14517,6815905,13329,0,0,N,N,N,CP_Units,TT_FinMile,DT_FixedDUR2,RV_OK,TK_NotStart,CO01ET0110,01E Mechanical Completion,,1440.01666666667,0,0,0,0,0,0,0,0,0,,,,2008-04-12 08:01,2008-04-12 08:01,,2007-08-16 17:00,2007-08-16 17:00,2007-08-16 17:00,2007-08-16 17:00,2007-08-16 17:00,2007-08-16 17:00,,2008-04-12 08:01,2008-04-12 08:01,,PT_Normal,,,,,IvNnKVQiRA6E4FqJen88nA,50nQXTm570KBwpKFVyLlrx,,,N,0,0,,,2007-02-01 02:41,2007-02-04 01:00,hbe4678,hbe4678,2007-08-16 17:00,2007-08-16 17:00,0
532,12456713,14517,6815905,13332,0,0,N,N,N,CP_Units,TT_FinMile,DT_FixedDUR2,RV_OK,TK_NotStart,SC01ET0120,01E RFSU,,1912.01666666667,2384,0,0,0,0,0,0,0,0,,,,2008-04-12 08:01,2008-04-12 08:01,,2007-08-16 17:00,2007-08-16 17:00,2007-08-16 17:00,2007-08-16 17:00,2007-08-16 17:00,2007-08-16 17:00,,2008-04-12 08:01,2008-04-12 08:01,,PT_Normal,,,,,OAOq685gQmKzrTcULTuxKA,LhO0ALDlkEiDshLBr6qw5h,,,N,0,0,,,2007-02-01 02:41,2007-02-04 01:00,hbe4678,hbe4678,2007-08-16 17:00,2007-08-16 17:00,0
533,12456714,14517,6815905,13329,0,0,N,N,N,CP_Units,TT_FinMile,DT_FixedDUR2,RV_OK,TK_NotStart,CO01GT0110,01G Mechanical Completion,,-280,0,0,0,0,0,0,0,0,0,,,,2007-11-19 17:00,2007-11-19 17:00,,2008-01-05 17:00,2008-01-05 17:00,2008-01-05 17:00,2008-01-05 17:00,2008-01-05 17:00,2008-01-05 17:00,,2007-11-19 17:00,2007-11-19 17:00,,PT_Normal,,,,,+ymcbJhkSTShCapjxO6acA,G5jQs2LgRkq5+BRN/WGDHB,,,N,0,0,,,2007-02-01 02:41,2007-02-01 02:43,hbe4678,hbe4678,2008-01-05 17:00,2008-01-05 17:00,0
534,12456715,14517,6815905,13332,0,0,N,N,N,CP_Units,TT_FinMile,DT_FixedDUR2,RV_OK,TK_NotStart,SC01GT0120,01G RFSU,,-376,0,0,0,0,0,0,0,0,0,,,,2007-11-19 17:00,2007-11-19 17:00,,2008-01-05 17:00,2008-01-05 17:00,2008-01-05 17:00,2008-01-05 17:00,2008-01-05 17:00,2008-01-05 17:00,,2007-11-19 17:00,2007-11-19 17:00,,PT_Normal,,,,,vi8Ciu4JQ1iSpNR3q+Fgmg,PWTxmeQtJEmB15zddBGX9x,,,N,0,0,,,2007-02-01 02:41,2007-02-01 02:43,hbe4678,hbe4678,2008-01-05 17:00,2008-01-05 17:00,0
535,12456716,14517,6815905,13329,0,0,N,N,N,CP_Units,TT_FinMile,DT_FixedDUR2,RV_OK,TK_NotStart,CO01HT0110,01H Mechanical Completion,,264.016666666667,0,0,0,0,0,0,0,0,0,,,,2007-11-27 08:01,2007-11-27 08:01,,2007-10-10 17:00,2007-10-10 17:00,2007-10-10 17:00,2007-10-10 17:00,2007-10-10 17:00,2007-10-10 17:00,,2007-11-27 08:01,2007-11-27 08:01,,PT_Normal,,,,,Rx14k6KGSG+WWpbBN8+MSw,diw2u7ebWEqflAPpnfkF8R,,,N,0,0,,,2007-02-01 02:41,2007-02-04 01:00,hbe4678,hbe4678,2007-10-10 17:00,2007-10-10 17:00,0
536,12456717,14517,6815905,13332,0,0,N,N,N,CP_Units,TT_FinMile,DT_FixedDUR2,RV_OK,TK_NotStart,SC01HT0120,01H RFSU,,80.0166666666667,456,0,0,0,0,0,0,0,0,,,,2007-11-27 08:01,2007-11-27 08:01,,2007-11-16 17:00,2007-11-16 17:00,2007-11-16 17:00,2007-11-16 17:00,2007-11-16 17:00,2007-11-16 17:00,,2007-11-27 08:01,2007-11-27 08:01,,PT_Normal,,,,,juBCYHoGRs+AVj4Xa69Xwg,tnx47xGC7Uu+JIIeEYidzB,,,N,0,0,,,2007-02-01 02:41,2007-02-04 01:00,hbe4678,hbe4678,2007-11-16 17:00,2007-11-16 17:00,0
537,12456718,14517,6815905,13332,0,0,N,N,N,CP_Units,TT_FinMile,DT_FixedDUR2,RV_OK,TK_NotStart,SC01JT0120,01J RFSU,,3528,3999.98333333333,0,0,0,0,0,0,0,0,,,,2008-04-12 08:01,2008-04-12 08:01,,2007-01-27 08:01,2007-01-27 08:01,2007-01-27 08:01,2007-01-27 08:01,2007-01-27 08:01,2007-01-27 08:01,,2008-04-12 08:01,2008-04-12 08:01,,PT_Normal,,,,,H3iuvTJiTlmlKaLgcYeAvw,85+b7GHn3USuFphspQUvQh,,,N,0,0,,,2007-02-01 02:41,2007-02-04 01:00,hbe4678,hbe4678,2007-01-27 08:01,2007-01-27 08:01,0
538,12456719,14517,6815905,13329,0,0,N,N,N,CP_Units,TT_FinMile,DT_FixedDUR2,RV_OK,TK_NotStart,CO01YT0110,01Y Mechanical Completion,,472.016666666667,48,0,0,0,0,0,0,0,0,,,,2008-04-12 08:01,2008-04-12 08:01,,2008-02-02 17:00,2008-02-02 17:00,2008-02-02 17:00,2008-02-02 17:00,2008-02-02 17:00,2008-02-02 17:00,,2008-04-12 08:01,2008-04-12 08:01,,PT_Normal,,,,,63eDZ1P2QKennzO6/sTn7g,olUsXkfUMUKAlrigczK8TR,,,N,0,0,,,2007-02-01 02:41,2007-02-04 01:00,hbe4678,hbe4678,2008-02-02 17:00,2008-02-02 17:00,0
539,12456720,14517,6815905,13332,0,0,N,N,N,CP_Units,TT_FinMile,DT_FixedDUR2,RV_OK,TK_NotStart,SC01YT0120,01Y RFSU,,496.016666666667,968,0,0,0,0,0,0,0,0,,,,2008-04-12 08:01,2008-04-12 08:01,,2008-02-09 17:00,2008-02-09 17:00,2008-02-09 17:00,2008-02-09 17:00,2008-02-09 17:00,2008-02-09 17:00,,2008-04-12 08:01,2008-04-12 08:01,,PT_Normal,,,,,GV/oSU7MSD2DOhiR1VKk2w,jt45OyA93EK3ctfjYQfXLh,,,N,0,0,,,2007-02-01 02:41,2007-02-04 01:00,hbe4678,hbe4678,2008-02-09 17:00,2008-02-09 17:00,0
540,12456721,14517,6815905,13332,0,0,N,N,N,CP_Units,TT_FinMile,DT_FixedDUR2,RV_OK,TK_NotStart,SC01UT0120,01U RFSU,,2816.01666666667,3288,0,0,0,0,0,0,0,0,,,,2008-04-12 08:01,2008-04-12 08:01,,2007-04-25 17:00,2007-04-25 17:00,2007-04-25 17:00,2007-04-25 17:00,2007-04-25 17:00,2007-04-25 17:00,,2008-04-12 08:01,2008-04-12 08:01,,PT_Normal,,,,,M/K3/qlnT42n2xCjx54ztA,X82pnTBT1UaaH0vdhHlwPB,,,N,0,0,,,2007-02-01 02:41,2007-02-04 01:00,hbe4678,hbe4678,2007-04-25 17:00,2007-04-25 17:00,0
541,12456722,14517,6815905,13329,0,0,N,N,N,CP_Units,TT_FinMile,DT_FixedDUR2,RV_OK,TK_NotStart,CO01UDT110,01U Mechanical Completion,,2216.01666666667,0,0,0,0,0,0,0,0,0,,,,2008-04-12 08:01,2008-04-12 08:01,,2007-04-25 17:00,2007-04-25 17:00,2007-04-25 17:00,2007-04-25 17:00,2007-04-25 17:00,2007-04-25 17:00,,2008-04-12 08:01,2008-04-12 08:01,,PT_Normal,,,,,fpTrnYTOTOSDxjCEzmNIMA,50nQXTm570KBwpKFVyLlrx,,,N,0,0,,,2007-02-01 02:41,2007-02-04 01:00,hbe4678,hbe4678,2007-04-25 17:00,2007-04-25 17:00,0
542,12456723,14517,6815905,13329,0,0,N,N,N,CP_Units,TT_FinMile,DT_FixedDUR2,RV_OK,TK_NotStart,CO01FT0110,01F Mechanical Completion,,1216.01666666667,0,0,0,0,0,0,0,0,0,,,,2008-03-10 08:01,2008-03-10 08:01,,2007-08-16 17:00,2007-08-16 17:00,2007-08-16 17:00,2007-08-16 17:00,2007-08-16 17:00,2007-08-16 17:00,,2008-03-10 08:01,2008-03-10 08:01,,PT_Normal,,,,,lUaSD0yVRa2j0PRd3SE0gw,+aB6CMOt00CbCgxxhkP5dx,,,N,0,0,,,2007-02-01 02:41,2007-02-04 01:00,hbe4678,hbe4678,2007-08-16 17:00,2007-08-16 17:00,0
543,12456724,14517,6815905,13332,0,0,N,N,N,CP_Units,TT_FinMile,DT_FixedDUR2,RV_OK,TK_NotStart,SC01FT0120,01F RFSU,,1912.01666666667,2384,0,0,0,0,0,0,0,0,,,,2008-04-12 08:01,2008-04-12 08:01,,2007-08-16 17:00,2007-08-16 17:00,2007-08-16 17:00,2007-08-16 17:00,2007-08-16 17:00,2007-08-16 17:00,,2008-04-12 08:01,2008-04-12 08:01,,PT_Normal,,,,,0TmX9FGDToe6sfQSY9kRlA,etL7rt8mF06eZ4Tq5AMduB,,,N,0,0,,,2007-02-01 02:41,2007-02-04 01:00,hbe4678,hbe4678,2007-08-16 17:00,2007-08-16 17:00,0
544,12456725,14517,6815905,13329,0,0,N,N,N,CP_Units,TT_FinMile,DT_FixedDUR2,RV_OK,TK_NotStart,CO01AT0110,01A Mechanical Completion,,-95.9833333333333,0,0,0,0,0,0,0,0,0,,,,2008-01-14 08:01,2008-01-14 08:01,,2008-01-27 17:00,2008-01-27 17:00,2008-01-27 17:00,2008-01-27 17:00,2008-01-27 17:00,2008-01-27 17:00,,2008-01-14 08:01,2008-01-14 08:01,,PT_Normal,,,,,5uPSGfa5Tja3Kv1Z2jQgMQ,1QO1X51WKkm3uxedeCQVjB,,,N,0,0,,,2007-02-01 02:41,2007-02-04 01:00,hbe4678,hbe4678,2008-01-27 17:00,2008-01-27 17:00,0
545,12456726,14517,6815905,13332,0,0,N,N,N,CP_Units,TT_FinMile,DT_FixedDUR2,RV_OK,TK_NotStart,SC01AT0120,01A RFSU,,-111.983333333333,264,0,0,0,0,0,0,0,0,,,,2008-01-15 08:01,2008-01-15 08:01,,2008-01-28 17:00,2008-01-28 17:00,2008-01-28 17:00,2008-01-28 17:00,2008-01-28 17:00,2008-01-28 17:00,,2008-01-15 08:01,2008-01-15 08:01,,PT_Normal,,,,,+/mXHpmcRoKbgpBUE42/fA,ySS/QH+dDEi/PVWVa30oWR,,,N,0,0,,,2007-02-01 02:41,2007-02-04 01:00,hbe4678,hbe4678,2008-01-28 17:00,2008-01-28 17:00,0
546,12456727,14517,6815905,13329,0,0,N,N,N,CP_Units,TT_FinMile,DT_FixedDUR2,RV_OK,TK_NotStart,CO01BT0110,01B Mechanical Completion,,-87.9833333333333,48,0,0,0,0,0,0,0,0,,,,2008-01-15 08:01,2008-01-15 08:01,,2008-01-27 17:00,2008-01-27 17:00,2008-01-27 17:00,2008-01-27 17:00,2008-01-27 17:00,2008-01-27 17:00,,2008-01-15 08:01,2008-01-15 08:01,,PT_Normal,,,,,5jQFeeTZTxuU9Dtaiq11Gw,4a2HHSpu5kmScPGmfjN88B,,,N,0,0,,,2007-02-01 02:41,2007-02-04 01:00,hbe4678,hbe4678,2008-01-27 17:00,2008-01-27 17:00,0
547,12456728,14517,6815905,13332,0,0,N,N,N,CP_Units,TT_FinMile,DT_FixedDUR2,RV_OK,TK_NotStart,SC01BT0120,01B RFSU,,-279.983333333333,96,0,0,0,0,0,0,0,0,,,,2008-01-15 08:01,2008-01-15 08:01,,2008-02-18 17:00,2008-02-18 17:00,2008-02-18 17:00,2008-02-18 17:00,2008-02-18 17:00,2008-02-18 17:00,,2008-01-15 08:01,2008-01-15 08:01,,PT_Normal,,,,,uQcALCUvSSmUnPGOoifnPA,EL1o4Y6DtkWFerMjNqfhiR,,,N,0,0,,,2007-02-01 02:41,2007-02-04 01:00,hbe4678,hbe4678,2008-02-18 17:00,2008-02-18 17:00,0
548,12456729,14517,6815906,13329,1,0,N,N,N,CP_Units,TT_Task,DT_FixedDUR2,RV_OK,TK_NotStart,CO01CU3110,01C U/G Earthing Installation,,1328.01666666667,48,48,0,0,0,48,0,0,0,,,,2007-11-15 08:01,2007-11-22 08:01,,2007-04-14 08:00,2007-04-19 17:00,2007-04-14 08:00,2007-04-19 17:00,2007-04-14 08:00,2007-04-19 17:00,,2007-11-15 08:01,2007-11-22 08:01,,PT_Normal,,,,,cb+ocFWlTfGJQL5tzwn5SA,vwmvaL14WkGCPSwOa3/OSR,,,N,0,0,,,2007-02-01 02:41,2007-02-04 01:00,hbe4678,hbe4678,2007-04-14 08:00,2007-04-19 17:00,48
549,12456730,14517,6815906,13329,1,0,N,N,N,CP_Units,TT_Task,DT_FixedDUR2,RV_OK,TK_NotStart,CO01DU3110,01D U/G Earthing Installation,,904.016666666667,328,104,0,0,0,104,0,0,0,,,,2007-08-12 08:01,2007-08-27 08:01,,2007-04-02 08:00,2007-04-16 17:00,2007-04-02 08:00,2007-04-16 17:00,2007-04-02 08:00,2007-04-16 17:00,,2007-08-12 08:01,2007-08-27 08:01,,PT_Normal,,,,,WNPkANMNTmOMFBkjbnlkcQ,XZQSX7MjH0WvSAO1Zo3SWh,,,N,0,0,,,2007-02-01 02:41,2007-02-04 01:00,hbe4678,hbe4678,2007-04-02 08:00,2007-04-16 17:00,104
550,12456731,14517,6815906,13329,1,0,N,N,N,CP_Units,TT_Task,DT_FixedDUR2,RV_OK,TK_NotStart,CO01GU3110,01G U/G Earthing Installation,,1168,608,96,0,0,0,96,0,0,0,,,,2007-10-23 08:00,2007-11-05 17:00,,2007-04-14 08:00,2007-04-26 17:00,2007-04-14 08:00,2007-04-26 17:00,2007-04-14 08:00,2007-04-26 17:00,,2007-10-23 08:00,2007-11-05 17:00,,PT_Normal,,,,,8VzaPJSiQmyv8siVKVQBWQ,8aXgytMizEGCZ/3l4+Rxvx,,,N,0,0,,,2007-02-01 02:41,2007-02-01 02:43,hbe4678,hbe4678,2007-04-14 08:00,2007-04-26 17:00,96
551,12456732,14517,6815906,13329,1,0,N,N,N,CP_Units,TT_Task,DT_FixedDUR2,RV_OK,TK_NotStart,CO01HU3110,01H U/G Earthing Installation,,1072.01666666667,144,96,0,0,0,96,0,0,0,,,,2007-07-30 08:01,2007-08-13 08:01,,2007-02-24 08:00,2007-03-08 17:00,2007-02-24 08:00,2007-03-08 17:00,2007-02-24 08:00,2007-03-08 17:00,,2007-07-30 08:01,2007-08-13 08:01,,PT_Normal,,,,,NLbDSfWwShG8NVX4pln0qQ,7B8u1bCssUGHRMM2m0aOmh,,,N,0,0,,,2007-02-01 02:41,2007-02-04 01:00,hbe4678,hbe4678,2007-02-24 08:00,2007-03-08 17:00,96
552,12456733,14517,6815906,13329,1,0,N,N,N,CP_Units,TT_Task,DT_FixedDUR2,RV_OK,TK_NotStart,CO01YU3110,01Y U/G Earthing Installation - Pipe Rack,,1072,0,288,0,0,0,288,0,0,0,,,,2007-07-02 08:00,2007-08-12 17:00,,2007-01-27 08:00,2007-03-08 17:00,2007-01-27 08:00,2007-03-08 17:00,2007-01-27 08:00,2007-03-08 17:00,,2007-07-02 08:00,2007-08-12 17:00,,PT_Normal,,,,,KWFlXCPJSeOTICbbrxAIOA,yhBCgGIGSki33lL7cjS7YR,,,N,0,0,,,2007-02-01 02:41,2007-02-01 02:43,hbe4678,hbe4678,2007-01-27 08:00,2007-03-08 17:00,288
553,12456734,14517,6815906,13329,1,0,N,N,N,CP_Units,TT_Task,DT_FixedDUR2,RV_OK,TK_NotStart,CO01BU3110,01B U/G Earthing Installation,,1384.01666666667,1664,136,0,0,0,136,0,0,0,,,,2007-11-14 08:01,2007-12-04 08:01,,2007-04-04 08:00,2007-04-23 17:00,2007-04-04 08:00,2007-04-23 17:00,2007-04-04 08:00,2007-04-23 17:00,,2007-11-14 08:01,2007-12-04 08:01,,PT_Normal,,,,,JQCbW1yRSUmIFKvavClNxQ,w+RmMNWz90G5Y+Hu7T3g6h,,,N,0,0,,,2007-02-01 02:41,2007-02-04 01:00,hbe4678,hbe4678,2007-04-04 08:00,2007-04-23 17:00,136
554,12456735,14517,6815906,13329,1,0,N,N,N,CP_Units,TT_WBS,DT_FixedDUR2,RV_OK,TK_Active,WO010U3100,010 Install U/G Electrical,1348,1360.01666666667,4736,624,10227.15,43346.87,53574.02,624,0,0,0,,2007-01-31 08:00,,2007-07-02 08:00,2007-12-04 08:01,,2007-01-27 08:00,2007-04-26 17:00,2007-01-27 08:00,2007-04-26 17:00,2007-01-27 08:00,2007-04-26 17:00,,2007-07-02 08:00,2007-12-04 08:01,,PT_Normal,,,,,rwkEj0GxTzGhZTR0ECeHZQ,9K0W2oBHSkKIcBBHaez6vh,,,N,0,0,,,2007-02-01 02:41,2007-02-04 01:05,hbe4678,hbe4678,2007-01-27 08:00,2007-04-26 17:00,624
555,12456736,14517,6815907,13329,1,0,N,N,N,CP_Units,TT_Task,DT_FixedDUR2,RV_OK,TK_NotStart,CO01BU4120,01B U/G Piping Installation,,1384.01666666667,0,272,0,0,0,272,0,0,0,,,,2007-09-26 08:01,2007-11-20 08:01,,2007-03-01 08:00,2007-04-09 17:00,2007-03-01 08:00,2007-04-09 17:00,2007-03-01 08:00,2007-04-09 17:00,,2007-09-26 08:01,2007-11-20 08:01,,PT_Normal,,,,,mSsOC6+iT7GD4rHJ2FZsGQ,s+oeoBKEOEiV5geo2eEE/x,,,N,0,0,,,2007-02-01 02:41,2007-02-04 01:00,hbe4678,hbe4678,2007-03-01 08:00,2007-04-09 17:00,272
556,12456737,14517,6815907,13329,1,0,N,N,N,CP_Units,TT_WBS,DT_FixedDUR2,RV_OK,TK_Active,WO010U4100,010 U/G Piping Installation,1348,1368.01666666667,4744,560,13015.59,113727.38,126742.97,1200,0,0,0,,2006-09-24 00:00,,2007-04-28 08:01,2007-12-04 08:01,,2007-02-04 08:00,2007-04-25 17:00,2007-02-04 08:00,2007-04-25 17:00,2006-10-18 08:00,2007-04-25 17:00,,2007-04-28 08:01,2007-12-04 08:01,,PT_Normal,,,,,X0bYL+5sTSCQ6BY9ElILZQ,p4BaTzfqbk2TnxQvrj1/8B,,,N,0,0,,,2007-02-01 02:41,2007-02-04 01:05,hbe4678,hbe4678,2007-02-04 08:00,2007-04-25 17:00,560
557,12456738,14517,6815907,13329,1,0,N,N,N,CP_Units,TT_Task,DT_FixedDUR2,RV_OK,TK_NotStart,CO01CU4120,01C U/G Piping Installation,,1280.01666666667,0,96,0,0,0,96,0,0,0,,,,2007-10-10 08:01,2007-11-01 08:01,,2007-03-24 08:00,2007-04-05 17:00,2007-03-24 08:00,2007-04-05 17:00,2007-03-24 08:00,2007-04-05 17:00,,2007-10-10 08:01,2007-11-01 08:01,,PT_Normal,,,,,55MEoPTMQn6z6Ln/SwJkIg,HBwQo2cEfUuoun66ea5yux,,,N,0,0,,,2007-02-01 02:41,2007-02-04 01:00,hbe4678,hbe4678,2007-03-24 08:00,2007-04-05 17:00,96
558,12456739,14517,6815907,13329,1,0,N,N,N,CP_Units,TT_Task,DT_FixedDUR2,RV_OK,TK_NotStart,CO01DU4120,01D U/G Piping Installation,,392.016666666667,0,216,0,0,0,216,0,0,0,,,,2007-04-28 08:01,2007-05-29 08:01,,2007-03-01 08:00,2007-04-01 17:00,2007-03-01 08:00,2007-04-01 17:00,2007-03-01 08:00,2007-04-01 17:00,,2007-04-28 08:01,2007-05-29 08:01,,PT_Normal,,,,,arN3gvvxSIaYmNrbCCD9bQ,h7LCg9LPLECugtoI+n7I6x,,,N,0,0,,,2007-02-01 02:41,2007-02-04 01:00,hbe4678,hbe4678,2007-03-01 08:00,2007-04-01 17:00,216
559,12456740,14517,6815907,13329,1,0,N,N,N,CP_Units,TT_Task,DT_FixedDUR2,RV_OK,TK_Active,CO01UP0150,01U LB Pipe Erection (Firewater Piping),,1696.01666666667,0,232,0,0,0,1152,0,0,0,,2006-09-24 00:00,,2007-10-31 08:01,2007-12-04 08:01,2007-02-28 17:00,2007-02-04 08:00,2007-03-08 17:00,2007-02-04 08:00,2007-03-08 17:00,2006-10-18 08:00,2007-04-18 17:00,,2007-10-31 08:01,2007-12-04 08:01,,PT_Normal,2006-10-17 00:00,2006-11-30 00:00,,,3eJNE9IqTTmmxrGSRRPJbw,VXAFTbYhJEmTxTNBxX2VSR,,,N,0,0,,,2007-02-01 02:41,2007-02-04 01:00,hbe4678,hbe4678,2007-02-04 08:00,2007-03-08 17:00,232
560,12456741,14517,6815907,13329,1,0,N,N,N,CP_Units,TT_Task,DT_FixedDUR2,RV_OK,TK_NotStart,CO01EU4130,01E/F/G U/G Piping Installation (to Bldg Stub Outs),1348,1176,0,384,0,384,0,384,0,0,0,2007-03-01 08:00,,,2007-08-20 08:00,2007-11-05 17:00,,2007-03-01 08:00,2007-04-25 17:00,2007-03-01 08:00,2007-04-25 17:00,2007-03-01 08:00,2007-04-25 17:00,,2007-08-20 08:00,2007-11-05 17:00,CS_MSOA,PT_Normal,,,,,N90mUDNERdaoMQshFrK2vA,gyRNYkk+g0KDrwJujTlWGR,,,N,0,0,,,2007-02-01 02:41,2007-02-01 02:43,hbe4678,hbe4678,2007-03-01 08:00,2007-04-25 17:00,384
561,12456742,14517,6815907,13329,1,0,N,N,N,CP_Units,TT_Task,DT_FixedDUR2,RV_OK,TK_NotStart,CO01JP0230,01J U/G Pipe Erection - Piping to Corridor,,1280,416,192,0,0,0,192,0,0,0,,,,2007-09-03 08:01,2007-10-23 08:01,,2007-02-28 08:01,2007-03-28 08:01,2007-02-28 08:01,2007-03-28 08:01,2007-02-28 08:01,2007-03-28 08:01,,2007-09-03 08:01,2007-10-23 08:01,,PT_Normal,,,,,y62HRcoqRSmAPZNfIj8CjQ,HVDnvMJjK0ipIoUmloBMAx,,,N,0,0,,,2007-02-01 02:41,2007-02-01 02:43,hbe4678,hbe4678,2007-02-28 08:01,2007-03-28 08:01,192
562,12456743,14517,6815908,13329,1,0,N,N,N,CP_Units,TT_Task,DT_FixedDUR2,RV_OK,TK_Active,CO01DV1110,01D Paint Fabricated Pipe Spools,,1136.01666666667,864,128,0,0,0,128,0,0,0,,2006-11-23 00:00,,2007-10-03 08:01,2007-11-03 08:01,,2007-04-10 08:00,2007-04-28 17:00,2007-04-10 08:00,2007-04-28 17:00,2007-01-16 08:00,2007-02-03 17:00,,2007-10-03 08:01,2007-11-03 08:01,,PT_Normal,,,,,f2V9O6+XTuefnj2g7cI9Rw,1ntWqZ3ISUiS3EdLF4xhqB,,,N,0,0,,,2007-02-01 02:41,2007-02-04 01:00,hbe4678,hbe4678,2007-04-10 08:00,2007-04-28 17:00,128
563,12456744,14517,6815908,13329,1,0,N,N,N,CP_Units,TT_Task,DT_FixedDUR2,RV_OK,TK_NotStart,CO01DV1120,01D Paint Touch-up - Piping,,360.016666666667,536,128,0,0,0,128,0,0,0,,,,2007-11-22 08:01,2007-12-11 08:01,,2007-09-09 08:00,2007-10-10 17:00,2007-09-09 08:00,2007-10-10 17:00,2007-09-09 08:00,2007-10-10 17:00,,2007-11-22 08:01,2007-12-11 08:01,,PT_Normal,,,,,L4oTH8MTQQq7uI2wy+pp4g,2DbcDevC+kWadiGNCJVDdR,,,N,0,0,,,2007-02-01 02:41,2007-02-04 01:00,hbe4678,hbe4678,2007-09-09 08:00,2007-10-10 17:00,128
564,12456745,14517,6815908,13329,1,0,N,N,N,CP_Units,TT_Task,DT_FixedDUR2,RV_OK,TK_NotStart,CO01DV1130,01D Paint Touch-up - Equipment,,704.016666666667,0,128,0,0,0,128,0,0,0,,,,2007-11-10 08:01,2007-11-28 08:01,,2007-07-08 08:00,2007-07-25 17:00,2007-07-08 08:00,2007-07-25 17:00,2007-07-08 08:00,2007-07-25 17:00,,2007-11-10 08:01,2007-11-28 08:01,,PT_Normal,,,,,i6KnYftqTZSLgp2yGTAjOw,0hvA3MVvR0KvbS8sD+WmHh,,,N,0,0,,,2007-02-01 02:41,2007-02-04 01:00,hbe4678,hbe4678,2007-07-08 08:00,2007-07-25 17:00,128
565,12456746,14517,6815908,13329,1,0,N,N,N,CP_Units,TT_Task,DT_FixedDUR2,RV_OK,TK_Active,CO01YV1110,01Y Paint Fabricated Pipe Spools,,1192,0,63.983333,0,0,0,336,0,0,0,,2006-11-27 08:00,,2007-08-20 08:01,2007-08-28 17:00,2007-01-21 17:00,2007-02-27 08:01,2007-03-07 17:00,2007-02-27 08:01,2007-03-07 17:00,2006-11-27 08:00,2007-01-21 17:00,,2007-08-20 08:01,2007-08-28 17:00,,PT_Normal,,,,,bbTlVWoATWKPzv0aJabOmg,myosK10mkk+d113Ann/vex,,,N,0,0,,,2007-02-01 02:41,2007-02-01 02:43,hbe4678,hbe4678,2007-02-27 08:01,2007-03-07 17:00,63.983333
566,12456747,14517,6815908,13329,1,0,N,N,N,CP_Units,TT_Task,DT_FixedDUR2,RV_OK,TK_NotStart,CO01YV1120,01Y Paint Touch-up - Piping,,1352.01666666667,880,288,0,0,0,288,0,0,0,,,,2008-03-01 08:01,2008-04-12 08:01,,2007-07-19 08:00,2007-08-29 17:00,2007-07-19 08:00,2007-08-29 17:00,2007-07-19 08:00,2007-08-29 17:00,,2008-03-01 08:01,2008-04-12 08:01,,PT_Normal,,,,,vYy9DVEDSOKP9hjnHsukcA,JqHB1OLx+kKHw7wpjxJZkx,,,N,0,0,,,2007-02-01 02:41,2007-02-04 01:00,hbe4678,hbe4678,2007-07-19 08:00,2007-08-29 17:00,288
567,12456748,14517,6815908,13329,1,0,N,N,N,CP_Units,TT_Task,DT_FixedDUR2,RV_OK,TK_NotStart,CO01AV1120,01A Paint Touch-up - Piping,,464.016666666667,560,24,0,0,0,24,0,0,0,,,,2008-01-10 08:01,2008-01-14 08:01,,2007-10-29 08:00,2007-10-31 17:00,2007-10-29 08:00,2007-10-31 17:00,2007-10-29 08:00,2007-10-31 17:00,,2008-01-10 08:01,2008-01-14 08:01,,PT_Normal,,,,,u+deqGcCSkqAqKhha3EpKQ,9hHsqCwWTkG62Ldg+LAJZh,,,N,0,0,,,2007-02-01 02:41,2007-02-04 01:00,hbe4678,hbe4678,2007-10-29 08:00,2007-10-31 17:00,24
568,12456749,14517,6815908,13329,1,0,N,N,N,CP_Units,TT_WBS,DT_FixedDUR2,RV_OK,TK_Active,WO010V1100,010 Paint,1340,1048.01666666667,3576,1760,4127.67,42034.93,46162.6,2152,0,0,0,,2006-11-23 00:00,,2007-08-20 08:01,2008-04-12 08:01,,2007-01-30 08:00,2007-11-04 17:00,2007-01-30 08:00,2007-11-04 17:00,2006-11-27 08:00,2007-11-04 17:00,,2007-08-20 08:01,2008-04-12 08:01,,PT_Normal,,,,,Xv5k5pkjR7CUO96BcDf8vw,lLZO5QgQ20GmbSpCeqYnQB,,,N,0,0,,,2007-02-01 02:41,2007-02-04 01:05,hbe4678,hbe4678,2007-01-30 08:00,2007-11-04 17:00,1760
569,12456750,14517,6815908,13329,1,0,N,N,N,CP_Units,TT_Task,DT_FixedDUR2,RV_OK,TK_Active,CO01AV1110,01A Paint Fabricated Pipe Spools,,2024.01666666667,1592,24,0,0,0,24,0,0,0,,2006-12-25 00:00,,2007-12-13 08:01,2007-12-17 08:01,,2007-01-30 08:00,2007-02-01 17:00,2007-01-30 08:00,2007-02-01 17:00,2007-01-06 08:00,2007-01-08 17:00,,2007-12-13 08:01,2007-12-17 08:01,,PT_Normal,,,,,5KwsTU7pRWKgSrjhbWgF1g,jRI6qHjE1kyRbaa5ptPC1h,,,N,0,0,,,2007-02-01 02:41,2007-02-04 01:00,hbe4678,hbe4678,2007-01-30 08:00,2007-02-01 17:00,24
570,12456751,14517,6815908,13329,1,0,N,N,N,CP_Units,TT_Task,DT_FixedDUR2,RV_OK,TK_Active,CO01BV1110,01B Paint Fabricated Pipe Spools,,1224,968,160,0,0,0,160,0,0,0,,2006-11-23 00:00,,2007-10-24 08:00,2007-11-15 17:00,,2007-04-07 08:00,2007-04-29 17:00,2007-04-07 08:00,2007-04-29 17:00,2007-01-11 08:00,2007-02-03 17:00,,2007-10-24 08:00,2007-11-15 17:00,,PT_Normal,,,,,ke2iRgcCSTC+FdKwiWWm4w,oCm3ojsafUaD9+aFL4K8lR,,,N,0,0,,,2007-02-01 02:41,2007-02-01 02:43,hbe4678,hbe4678,2007-04-07 08:00,2007-04-29 17:00,160
571,12456752,14517,6815908,13329,1,0,N,N,N,CP_Units,TT_Task,DT_FixedDUR2,RV_OK,TK_NotStart,CO01BV1120,01B Paint Touch-up - Piping,,448.016666666667,536,160,0,0,0,160,0,0,0,,,,2007-12-17 08:01,2008-01-15 08:01,,2007-09-29 08:00,2007-11-04 17:00,2007-09-29 08:00,2007-11-04 17:00,2007-09-29 08:00,2007-11-04 17:00,,2007-12-17 08:01,2008-01-15 08:01,,PT_Normal,,,,,bDV5A4ZYRoaObvE8cYZRVg,FQT1OiXkF02mUIeuCraZcx,,,N,0,0,,,2007-02-01 02:41,2007-02-04 01:00,hbe4678,hbe4678,2007-09-29 08:00,2007-11-04 17:00,160
572,12456753,14517,6815908,13329,1,0,N,N,N,CP_Units,TT_Task,DT_FixedDUR2,RV_OK,TK_NotStart,CO01BV1130,01B Paint Touch-up - Equipment,,800.016666666667,0,160,0,0,0,160,0,0,0,,,,2007-11-19 08:01,2007-12-12 08:01,,2007-07-03 08:00,2007-07-25 17:00,2007-07-03 08:00,2007-07-25 17:00,2007-07-03 08:00,2007-07-25 17:00,,2007-11-19 08:01,2007-12-12 08:01,,PT_Normal,,,,,ivrXnETpR0iEmh7NPjoGwQ,JbsOwjwD4EKMYsSF4ZnWOR,,,N,0,0,,,2007-02-01 02:41,2007-02-04 01:00,hbe4678,hbe4678,2007-07-03 08:00,2007-07-25 17:00,160
573,12456754,14517,6815908,13329,1,0,N,N,N,CP_Units,TT_Task,DT_FixedDUR2,RV_OK,TK_Active,CO01CV1110,01C Paint Fabricated Pipe Spools,,1392,648,48,0,0,0,48,0,0,0,,2006-11-23 00:00,,2007-11-17 08:01,2007-11-24 08:01,,2007-04-05 08:01,2007-04-12 08:01,2007-04-05 08:01,2007-04-12 08:01,2007-01-28 08:00,2007-02-03 17:00,,2007-11-17 08:01,2007-11-24 08:01,,PT_Normal,,,,,S5jivl9VR9ePiiZAX/1dNQ,d9BQf+mL0kudwFqKhY+aQB,,,N,0,0,,,2007-02-01 02:41,2007-02-01 02:43,hbe4678,hbe4678,2007-04-05 08:01,2007-04-12 08:01,48
574,12456755,14517,6815908,13329,1,0,N,N,N,CP_Units,TT_Task,DT_FixedDUR2,RV_OK,TK_NotStart,CO01CV1120,01C Paint Touch-up - Piping,,744,0,144,0,0,0,144,0,0,0,,,,2007-11-28 08:01,2007-12-25 08:01,,2007-07-21 08:01,2007-08-11 08:01,2007-07-21 08:01,2007-08-11 08:01,2007-07-21 08:01,2007-08-11 08:01,,2007-11-28 08:01,2007-12-25 08:01,,PT_Normal,,,,,IkMhC1G6S7qLbNxFJzC4gg,vsr6vr0QkEKnRgeT9lmPNh,,,N,0,0,,,2007-02-01 02:41,2007-02-01 02:43,hbe4678,hbe4678,2007-07-21 08:01,2007-08-11 08:01,144
575,12456756,14517,6815908,13329,1,0,N,N,N,CP_Units,TT_Task,DT_FixedDUR2,RV_OK,TK_NotStart,CO01CV1130,01C Paint Touch-up - Equipment,,744,0,144,0,0,0,144,0,0,0,,,,2007-11-28 08:01,2007-12-25 08:01,,2007-07-21 08:01,2007-08-11 08:01,2007-07-21 08:01,2007-08-11 08:01,2007-07-21 08:01,2007-08-11 08:01,,2007-11-28 08:01,2007-12-25 08:01,,PT_Normal,,,,,sC2Gfj/gQw+Qn8QdZHFBgQ,IsoKosquxU+XID+6o8pith,,,N,0,0,,,2007-02-01 02:41,2007-02-01 02:43,hbe4678,hbe4678,2007-07-21 08:01,2007-08-11 08:01,144
576,12456757,14517,6815909,13329,1,0,N,N,N,CP_Units,TT_Task,DT_FixedDUR2,RV_OK,TK_NotStart,CO01BV2110,01B Insulate - Equipment,,800.016666666667,1040,160,0,0,0,160,0,0,0,,,,2007-12-17 08:01,2008-01-15 08:01,,2007-07-31 08:00,2007-08-22 17:00,2007-07-31 08:00,2007-08-22 17:00,2007-07-31 08:00,2007-08-22 17:00,,2007-12-17 08:01,2008-01-15 08:01,,PT_Normal,,,,,HMtwOesSR+SuwV3T2fpInA,g+KEU2tcZEGpPXs3QHUtSB,,,N,0,0,,,2007-02-01 02:41,2007-02-04 01:00,hbe4678,hbe4678,2007-07-31 08:00,2007-08-22 17:00,160
577,12456758,14517,6815909,13329,1,0,N,N,N,CP_Units,TT_Task,DT_FixedDUR2,RV_OK,TK_NotStart,CO01BV2120,01B Insulate - Piping,,256.016666666667,496,216,0,0,0,216,0,0,0,,,,2007-12-09 08:01,2008-01-15 08:01,,2007-11-01 08:00,2007-12-02 17:00,2007-11-01 08:00,2007-12-02 17:00,2007-11-01 08:00,2007-12-02 17:00,,2007-12-09 08:01,2008-01-15 08:01,,PT_Normal,,,,,IJV6ZvprQZ+UFY7j/SMUqA,eJWkToi7KkCJwU5+Or7UjR,,,N,0,0,,,2007-02-01 02:41,2007-02-04 01:00,hbe4678,hbe4678,2007-11-01 08:00,2007-12-02 17:00,216
578,12456759,14517,6815909,13329,1,0,N,N,N,CP_Units,TT_WBS,DT_FixedDUR2,RV_OK,TK_NotStart,WO010V2100,010 Insulation,1340,856.016666666667,3384,704,0,4519.62,4519.62,704,0,0,0,,,,2007-12-02 08:01,2008-04-12 08:01,,2007-07-31 08:00,2007-12-02 17:00,2007-07-31 08:00,2007-12-02 17:00,2007-07-31 08:00,2007-12-02 17:00,,2007-12-02 08:01,2008-04-12 08:01,,PT_Normal,,,,,/dQeY7qrTVSDlBBAAGPTOA,n3BCocsMC0a9UTj27lTkyR,,,N,0,0,,,2007-02-01 02:41,2007-02-04 01:05,hbe4678,hbe4678,2007-07-31 08:00,2007-12-02 17:00,704
579,12456760,14517,6815909,13329,1,0,N,N,N,CP_Units,TT_Task,DT_FixedDUR2,RV_OK,TK_NotStart,CO01CV2110,01C Insulate - Equipment,,744,839.983333333333,144,0,0,0,144,0,0,0,,,,2007-12-25 08:01,2008-01-15 08:01,,2007-08-11 08:01,2007-09-01 08:01,2007-08-11 08:01,2007-09-01 08:01,2007-08-11 08:01,2007-09-01 08:01,,2007-12-25 08:01,2008-01-15 08:01,,PT_Normal,,,,,U7JtHCwcSRGh9FH2YAFZGA,jfKgjhBgTkeOSbm2OwgcrR,,,N,0,0,,,2007-02-01 02:41,2007-02-04 01:00,hbe4678,hbe4678,2007-08-11 08:01,2007-09-01 08:01,144
580,12456761,14517,6815909,13329,1,0,N,N,N,CP_Units,TT_Task,DT_FixedDUR2,RV_OK,TK_NotStart,CO01CV2120,01C Insulate - Piping,,768,863.983333333333,144,0,0,0,144,0,0,0,,,,2007-12-25 08:01,2008-01-15 08:01,,2007-08-07 08:01,2007-08-28 08:01,2007-08-07 08:01,2007-08-28 08:01,2007-08-07 08:01,2007-08-28 08:01,,2007-12-25 08:01,2008-01-15 08:01,,PT_Normal,,,,,p5Zg1ECEQNChfs+MzIvDPg,od1wfAdcl0q5OOrci+PEbh,,,N,0,0,,,2007-02-01 02:41,2007-02-04 01:00,hbe4678,hbe4678,2007-08-07 08:01,2007-08-28 08:01,144
581,12456762,14517,6815909,13329,1,0,N,N,N,CP_Units,TT_Task,DT_FixedDUR2,RV_OK,TK_NotStart,CO01DV2110,01D Insulate - Equipment,,704.016666666667,896,128,0,0,0,128,0,0,0,,,,2007-12-08 08:01,2008-01-01 08:01,,2007-08-05 08:00,2007-08-22 17:00,2007-08-05 08:00,2007-08-22 17:00,2007-08-05 08:00,2007-08-22 17:00,,2007-12-08 08:01,2008-01-01 08:01,,PT_Normal,,,,,nJtqUzBqSxuPt+qK9bj04A,O9QALBDII0WQqzIAC6T8Px,,,N,0,0,,,2007-02-01 02:41,2007-02-04 01:00,hbe4678,hbe4678,2007-08-05 08:00,2007-08-22 17:00,128
582,12456763,14517,6815909,13329,1,0,N,N,N,CP_Units,TT_Task,DT_FixedDUR2,RV_OK,TK_NotStart,CO01DV2120,01D Insulate - Piping,,272.016666666667,464,168,0,0,0,168,0,0,0,,,,2007-12-02 08:01,2008-01-01 08:01,,2007-10-23 08:00,2007-11-15 17:00,2007-10-23 08:00,2007-11-15 17:00,2007-10-23 08:00,2007-11-15 17:00,,2007-12-02 08:01,2008-01-01 08:01,,PT_Normal,,,,,L2VEf946SL2jPLj+GK2UBA,1xousXg6WkOsCEpmnA8D3B,,,N,0,0,,,2007-02-01 02:41,2007-02-04 01:00,hbe4678,hbe4678,2007-10-23 08:00,2007-11-15 17:00,168
583,12456764,14517,6815909,13329,1,0,N,N,N,CP_Units,TT_Task,DT_FixedDUR2,RV_OK,TK_NotStart,CO01YV2120,01Y Insulate - Piping,,1064.01666666667,640,288,0,0,0,288,0,0,0,,,,2008-03-01 08:01,2008-04-12 08:01,,2007-08-30 08:00,2007-11-01 17:00,2007-08-30 08:00,2007-11-01 17:00,2007-08-30 08:00,2007-11-01 17:00,,2008-03-01 08:01,2008-04-12 08:01,,PT_Normal,,,,,ohIPniFpT16zpbqVOekczw,usf1ZLgKL06jM0MmBQnjeR,,,N,0,0,,,2007-02-01 02:41,2007-02-04 01:00,hbe4678,hbe4678,2007-08-30 08:00,2007-11-01 17:00,288
584,12456765,14517,6815911,13329,1,0,N,N,N,CP_Units,TT_Task,DT_FixedDUR2,RV_OK,TK_NotStart,CO01EA0130,01E Erect Guard House,1352,1528.01666666667,0,192,0,612,0,192,0,0,0,,,,2007-11-06 08:01,2007-12-04 08:01,,2007-03-06 08:00,2007-04-02 17:00,2007-03-06 08:00,2007-04-02 17:00,2007-03-06 08:00,2007-04-02 17:00,,2007-11-06 08:01,2007-12-04 08:01,,PT_Normal,,,,,bT+d06RpRlK9gVcDQBvdEg,xPnOzlvKr0ewuGY5I5EBAR,,,N,0,0,,,2007-02-01 02:41,2007-02-04 01:00,hbe4678,hbe4678,2007-03-06 08:00,2007-04-02 17:00,192
585,12456766,14517,6815911,13329,1,0,N,N,N,CP_Units,TT_Task,DT_FixedDUR2,RV_OK,TK_NotStart,CO01FA0130,01F Erect Mosque,1352,1144.01666666667,0,576,0,32701,0,576,0,0,0,,,,2007-08-20 08:01,2007-12-04 08:01,,2007-03-06 08:00,2007-05-28 17:00,2007-03-06 08:00,2007-05-28 17:00,2007-03-06 08:00,2007-05-28 17:00,,2007-08-20 08:01,2007-12-04 08:01,,PT_Normal,,,,,ufqL0U4wRcGwPWgE/4rZWQ,b2IFvZUrq0CMCTqQykgpEh,,,N,0,0,,,2007-02-01 02:41,2007-02-04 01:00,hbe4678,hbe4678,2007-03-06 08:00,2007-05-28 17:00,576
586,12456767,14517,6815911,13329,1,0,N,N,N,CP_Units,TT_Task,DT_FixedDUR2,RV_OK,TK_NotStart,CO01CA0110,01C Erect - EDR Shelter,1352,784,1063.98333333333,144,0,345,0,144,0,0,0,,,,2007-11-13 08:01,2007-12-04 08:01,,2007-06-30 08:01,2007-07-21 08:01,2007-06-30 08:01,2007-07-21 08:01,2007-06-30 08:01,2007-07-21 08:01,,2007-11-13 08:01,2007-12-04 08:01,,PT_Normal,,,,,cvIAR2EaTzS7NvoFdzX4cw,9WxfkH1t+E+88jJnwp7kBh,,,N,0,0,,,2007-02-01 02:41,2007-02-04 01:00,hbe4678,hbe4678,2007-06-30 08:01,2007-07-21 08:01,144
587,12456768,14517,6815911,13329,1,0,N,N,N,CP_Units,TT_WBS,DT_FixedDUR2,RV_OK,TK_Active,WO010A0100,010 Buildings,1352,752.016666666667,4128,1232,3898.8,131977.22,135876.02,2848.01666666667,0,0,0,,2006-12-11 00:00,,2007-01-10 08:00,2007-12-04 08:01,,2007-01-27 08:00,2007-07-24 17:00,2007-01-27 08:00,2007-07-24 17:00,2006-05-03 08:00,2007-07-21 08:01,,2007-01-10 08:00,2007-12-04 08:01,,PT_Normal,,,,,SIIuHFIpSoWZZSWYDy48mw,apo5JaSkX0mZeICP0MMgyB,,,N,0,0,,,2007-02-01 02:41,2007-02-04 01:05,hbe4678,hbe4678,2007-01-27 08:00,2007-07-24 17:00,1232
588,12456769,14517,6815911,13329,1,0,N,N,N,CP_Units,TT_Task,DT_FixedDUR2,RV_OK,TK_NotStart,CO01HA0110,01H Set 2610-K Electrical Power House,,608,199.983333333333,144,0,0,0,144,0,0,0,,,,2007-08-08 08:01,2007-08-29 08:01,,2007-05-12 08:01,2007-06-02 08:01,2007-05-12 08:01,2007-06-02 08:01,2007-05-12 08:01,2007-06-02 08:01,,2007-08-08 08:01,2007-08-29 08:01,,PT_Normal,,,,,0bdEYYFnSRuDgOgBNAKHtQ,GIeCvq1SQEKdhxvA6Nx3rR,,,N,0,0,,,2007-02-01 02:41,2007-02-04 01:00,hbe4678,hbe4678,2007-05-12 08:01,2007-06-02 08:01,144
589,12456770,14517,6815911,13329,1,0,N,N,N,CP_Units,TT_Task,DT_FixedDUR2,RV_OK,TK_Active,CO01GA0110,01G Erect Control Building (Continuation w/ Design Rev),1352,-112,0,1232,0,114950,0,1504,0,0,0,,2006-12-11 00:00,,2007-01-10 08:00,2007-07-08 17:00,2007-07-24 17:00,2007-01-27 08:00,2007-07-24 17:00,2007-01-27 08:00,2007-07-24 17:00,2006-05-03 08:00,2006-12-28 17:00,,2007-01-10 08:00,2007-07-08 17:00,,PT_Normal,,,,,mgJYZ4TpSVi4w8wC+t+J5w,B2fYBikdoEaJREbRmFCJ9x,,,N,0,0,,,2007-02-01 02:41,2007-02-01 02:43,hbe4678,hbe4678,2007-01-27 08:00,2007-07-24 17:00,1232
590,12456771,14517,6815912,13329,1,0,N,N,N,CP_Units,TT_Task,DT_FixedDUR2,RV_OK,TK_NotStart,CO01CC0120,"01C Form, Pour, Strip Fnds - Misc Fnds",,1280.01666666667,0,144,0,0,0,144,0,0,0,,,,2007-11-01 08:01,2007-11-22 08:01,,2007-04-07 08:00,2007-04-26 17:00,2007-04-07 08:00,2007-04-26 17:00,2007-04-07 08:00,2007-04-26 17:00,,2007-11-01 08:01,2007-11-22 08:01,,PT_Normal,,,,,g5Hqp2tsTzGG3+H2HWD7WA,orG3K+Utqk6ceT/oBZBeLB,,,N,0,0,,,2007-02-01 02:41,2007-02-04 01:00,hbe4678,hbe4678,2007-04-07 08:00,2007-04-26 17:00,144
591,12456772,14517,6815912,13329,1,0,N,N,N,CP_Units,TT_Task,DT_FixedDUR2,RV_OK,TK_Active,CO01DC0110,"01D Form, Pour, Strip Fnds - Major Fnds Gen'l",,392.016666666667,0,288,0,0,0,288,0,0,0,,2006-12-03 00:00,,2007-05-29 08:01,2007-07-10 08:01,,2007-04-02 08:00,2007-05-13 17:00,2007-04-02 08:00,2007-05-13 17:00,2007-03-28 08:00,2007-05-08 17:00,,2007-05-29 08:01,2007-07-10 08:01,,PT_Normal,,,,,BhxFzo7eRgOy3+52gjJhbg,HCqJ8yUsu0yK9g+HNyKHPh,,,N,0,0,,,2007-02-01 02:41,2007-02-04 01:00,hbe4678,hbe4678,2007-04-02 08:00,2007-05-13 17:00,288
592,12456773,14517,6815912,13329,1,0,N,N,N,CP_Units,TT_Task,DT_FixedDUR2,RV_OK,TK_NotStart,CO01DC0120,"01D Form, Pour, Strip Fnds - Misc Fnds",,576.016666666667,0,144,0,0,0,144,0,0,0,,,,2007-08-06 08:01,2007-08-27 08:01,,2007-05-14 08:00,2007-06-03 17:00,2007-05-14 08:00,2007-06-03 17:00,2007-05-14 08:00,2007-06-03 17:00,,2007-08-06 08:01,2007-08-27 08:01,,PT_Normal,,,,,L07SipbqTCW6K7vAl30JNA,SIB7WyVlQUWVKAst8YDdqR,,,N,0,0,,,2007-02-01 02:41,2007-02-04 01:00,hbe4678,hbe4678,2007-05-14 08:00,2007-06-03 17:00,144
593,12456774,14517,6815912,13329,1,100,N,N,N,CP_Units,TT_Task,DT_FixedDUR2,RV_OK,TK_Complete,CO01DC0140,01D Form Pour Strip Fnds -  Sleepers,,,,0,0,0,0,240,0,0,0,,2006-10-19 00:00,2006-12-02 00:00,2007-08-21 08:01,2007-08-21 08:01,,2007-01-27 00:00,2007-01-27 00:00,,,2007-04-03 08:00,2007-05-07 17:00,,,,,PT_Normal,,,,,hQLjqrhES6mqdDGm6GVuZg,PmbCwi92DUSn0f2h3kBx1R,,,N,0,0,,,2007-02-01 02:41,2007-02-04 01:05,hbe4678,hbe4678,,,0
594,12456775,14517,6815912,13329,1,100,N,N,N,CP_Units,TT_Task,DT_FixedDUR2,RV_OK,TK_Complete,CO01DC0150,"01D Form, Pour, Strip Fnd - 2101-U (Cooling Tower)",,,,0,0,0,0,672,0,0,0,,2006-04-30 08:00,2006-10-20 00:00,2007-04-08 08:01,2007-04-08 08:01,,2007-01-27 00:00,2007-01-27 00:00,,,2006-04-30 08:00,2006-08-05 17:00,,,,,PT_Normal,,,,,HwK6YkNjQrKDaB5T4/qBoA,R4oARsY5FUuJTr04EPTzxh,,,N,0,0,,,2007-02-01 02:41,2007-02-04 01:05,hbe4678,hbe4678,,,0
595,12456776,14517,6815912,13329,1,100,N,N,N,CP_Units,TT_Task,DT_FixedDUR2,RV_OK,TK_Complete,CO01GC0150,"01G Form, Pour, Strip Fnd - Control Building",,,,0,0,0,0,384,0,0,0,,2006-04-27 00:00,2006-05-02 00:00,2007-01-10 08:00,2007-01-10 08:00,,2007-01-27 00:00,2007-01-27 00:00,,,2006-06-03 08:01,2006-07-29 08:01,,,,,PT_Normal,,,,,smEYhg8CS6ScQJQgGRsM7g,orKE082JwEy24iYDX8sbVB,,,N,0,0,,,2007-02-01 02:41,2007-02-04 01:05,hbe4678,hbe4678,,,0
596,12456777,14517,6815912,13329,1,0,N,N,N,CP_Units,TT_Task,DT_FixedDUR2,RV_OK,TK_NotStart,CO01HC0110,"01H Form, Pour, Strip Piers - Substation Building",,896.016666666667,0,288,0,0,0,288,0,0,0,,,,2007-06-06 08:01,2007-07-18 08:01,,2007-01-27 08:00,2007-03-08 17:00,2007-01-27 08:00,2007-03-08 17:00,2007-01-27 08:00,2007-03-08 17:00,,2007-06-06 08:01,2007-07-18 08:01,,PT_Normal,,,,,t51mz2HgT0Or4ejBrDwQaw,oWCWmuYFJUqW0SQmsZmHyB,,,N,0,0,,,2007-02-01 02:41,2007-02-04 01:00,hbe4678,hbe4678,2007-01-27 08:00,2007-03-08 17:00,288
597,12456778,14517,6815912,13329,1,0,N,N,N,CP_Units,TT_Task,DT_FixedDUR2,RV_OK,TK_NotStart,CO01HC0120,"01H Form, Pour, Strip Fnds - Misc Fnds",,1408.01666666667,1144,96,0,0,0,96,0,0,0,,,,2007-11-13 08:01,2007-11-27 08:01,,2007-03-31 08:00,2007-04-12 17:00,2007-03-31 08:00,2007-04-12 17:00,2007-03-31 08:00,2007-04-12 17:00,,2007-11-13 08:01,2007-11-27 08:01,,PT_Normal,,,,,DpDs7fNhRuikNYUU9gLywQ,HOaEZ2uLAkqIcr622mhxCx,,,N,0,0,,,2007-02-01 02:41,2007-02-04 01:00,hbe4678,hbe4678,2007-03-31 08:00,2007-04-12 17:00,96
598,12456779,14517,6815912,13329,1,0,N,N,N,CP_Units,TT_Task,DT_FixedDUR2,RV_OK,TK_NotStart,CO01HC0140,01H Form Pour Strip Fnds -  Transformers & Generator,,928.016666666667,0,192,0,0,0,192,0,0,0,,,,2007-07-16 08:01,2007-08-13 08:01,,2007-03-03 08:00,2007-03-29 17:00,2007-03-03 08:00,2007-03-29 17:00,2007-03-03 08:00,2007-03-29 17:00,,2007-07-16 08:01,2007-08-13 08:01,,PT_Normal,,,,,EV0Vb8FeTC2DNuuR1jkUQw,ectj9+rS+EKevIRPT3ZNBB,,,N,0,0,,,2007-02-01 02:41,2007-02-04 01:00,hbe4678,hbe4678,2007-03-03 08:00,2007-03-29 17:00,192
599,12456780,14517,6815912,13329,1,100,N,N,N,CP_Units,TT_Task,DT_FixedDUR2,RV_OK,TK_Complete,CO01YC0140,01Y Form Pour Strip Fnds -  Pipe Rack,,,,0,0,0,0,480,0,0,0,,2006-07-13 08:00,2006-11-12 00:00,2007-05-21 08:00,2007-05-21 08:00,,2007-01-27 00:00,2007-01-27 00:00,,,2006-07-13 08:00,2006-09-20 17:00,,,,,PT_Normal,,,,,Whb1gqKsSAKBW99Mi/eZyg,WD9hGYa79EeLcDiSxaJkjx,,,N,0,0,,,2007-02-01 02:41,2007-02-04 01:05,hbe4678,hbe4678,,,0
600,12456781,14517,6815912,13329,1,100,N,N,N,CP_Units,TT_Task,DT_FixedDUR2,RV_OK,TK_Complete,CO01BC0110,"01B Form, Pour, Strip Fnds - Major Fnds Gen'l",,,,0,0,0,0,240,0,0,0,,2006-09-23 00:00,2006-11-01 00:00,2007-07-08 08:00,2007-07-08 08:00,,2007-01-27 00:00,2007-01-27 00:00,,,2006-09-23 08:00,2006-11-16 17:00,,,,,PT_Normal,,,,,/gT0XTiXSluXjtM11nzBOQ,edqnLaagZ06A4zG2Ral8cx,,,N,0,0,,,2007-02-01 02:41,2007-02-04 01:05,hbe4678,hbe4678,,,0
601,12456782,14517,6815912,13329,1,0,N,N,N,CP_Units,TT_Task,DT_FixedDUR2,RV_OK,TK_Active,CO01BC0120,"01B Form, Pour, Strip Fnds - Misc Fnds",,1680,0,72,0,0,0,96,0,0,0,,2006-11-20 00:00,,2007-10-21 08:00,2007-10-30 17:00,2007-02-05 17:00,2007-01-27 08:00,2007-02-05 17:00,2007-01-27 08:00,2007-02-05 17:00,2007-03-21 08:00,2007-04-03 17:00,,2007-10-21 08:00,2007-10-30 17:00,,PT_Normal,,,,,Le9sx3QHSJ2sW/uYdyqQkA,WGoxkfUoh0OgriIXyGzSaR,,,N,0,0,,,2007-02-01 02:41,2007-02-01 02:43,hbe4678,hbe4678,2007-01-27 08:00,2007-02-05 17:00,72
602,12456783,14517,6815912,13329,1,0,N,N,N,CP_Units,TT_Task,DT_FixedDUR2,RV_OK,TK_Active,CO01BC0140,01B Form Pour Strip Fnds -  Sleepers to Evap Pond,,1184,0,216,0,0,0,288,0,0,0,,2006-09-09 00:00,,2007-07-18 08:00,2007-08-18 17:00,2007-02-26 17:00,2007-01-27 08:00,2007-02-26 17:00,2007-01-27 08:00,2007-02-26 17:00,2006-10-31 08:00,2006-12-11 17:00,,2007-07-18 08:00,2007-08-18 17:00,,PT_Normal,,,,,W7QeF69MTOij8rDxIvYS5w,zfTCl35zkUOy/1o40wgxEB,,,N,0,0,,,2007-02-01 02:41,2007-02-01 02:43,hbe4678,hbe4678,2007-01-27 08:00,2007-02-26 17:00,216
603,12456784,14517,6815912,13329,1,100,N,N,N,CP_Units,TT_Task,DT_FixedDUR2,RV_OK,TK_Complete,CO01BC0150,"01B Form, Pour, Strip Fnd - 2001-FA (Water Storage Tank)",,,,0,0,0,0,192,0,0,0,,2006-05-28 00:00,2006-08-14 17:00,2007-02-06 08:01,2007-02-06 08:01,,2007-01-27 00:00,2007-01-27 00:00,,,2006-06-17 08:00,2006-07-13 17:00,,,,,PT_Normal,,,,,lR+8UfzzTk2RbTGyP7EZUQ,QM3j/YYRSkmztDndbmTuzB,,,N,0,0,,,2007-02-01 02:41,2007-02-04 01:05,hbe4678,hbe4678,,,0
604,12456785,14517,6815912,13329,1,100,N,N,N,CP_Units,TT_Task,DT_FixedDUR2,RV_OK,TK_Complete,CO01BC0160,"01B Form, Pour, Strip Fnd - 2001-FB (Water Storage Tank)",,,,0,0,0,0,192,0,0,0,,2006-05-20 08:01,2006-07-31 17:00,2007-03-05 08:01,2007-03-05 08:01,,2007-01-27 00:00,2007-01-27 00:00,,,2006-05-20 08:01,2006-06-17 08:01,,,,,PT_Normal,,,,,MxwFPVdFSIWN9TBek9INkQ,BysQ8uMZw0ufZ0Q6XdUlpR,,,N,0,0,,,2007-02-01 02:41,2007-02-04 01:05,hbe4678,hbe4678,,,0
605,12456786,14517,6815912,13329,1,0,N,N,N,CP_Units,TT_WBS,DT_FixedDUR2,RV_OK,TK_Active,WO010C0100,010 Concrete & Excavation,1355,1192.01666666667,4480,880,167543.69,98675.62,266219.31,2648,0,0,0,,2006-04-27 00:00,,2007-05-29 08:01,2007-12-17 08:01,,2007-01-27 08:00,2007-06-03 17:00,2007-01-27 08:00,2007-06-03 17:00,2006-04-30 08:00,2007-06-17 17:00,,2007-05-29 08:01,2007-12-17 08:01,,PT_Normal,,,,,ffmp/Z+JTx6l1pdHEshEfQ,c+YqU3ri1kOl8Gy2hOX4Ah,,,N,0,0,,,2007-02-01 02:41,2007-02-04 01:05,hbe4678,hbe4678,2007-01-27 08:00,2007-06-03 17:00,880
606,12456787,14517,6815912,13329,1,0,N,N,N,CP_Units,TT_Task,DT_FixedDUR2,RV_OK,TK_Active,CO01AC0120,"01A Form, Pour, Strip Fnds - Misc Fnds & Sumps...",,1976.01666666667,0,96,0,0,0,48,0,0,0,,2006-12-05 00:00,,2007-12-03 08:01,2007-12-17 08:01,2007-02-08 17:00,2007-01-27 08:00,2007-02-08 17:00,2007-01-27 08:00,2007-02-08 17:00,2007-06-11 08:00,2007-06-17 17:00,,2007-12-03 08:01,2007-12-17 08:01,,PT_Normal,,,,,+GqZ9XzhTZC5SHQA2R4whQ,kVMmBoZDq0GVYzyW8KhmIx,,,N,0,0,,,2007-02-01 02:41,2007-02-04 01:00,hbe4678,hbe4678,2007-01-27 08:00,2007-02-08 17:00,96
607,12456788,14517,6815912,13329,1,0,N,N,N,CP_Units,TT_Task,DT_FixedDUR2,RV_OK,TK_NotStart,CO01CC0110,"01C Form, Pour, Strip Fnds - Major Fnds Gen'l",,936.016666666667,0,192,0,0,0,192,0,0,0,,,,2007-07-24 08:01,2007-08-21 08:01,,2007-03-10 08:00,2007-04-05 17:00,2007-03-10 08:00,2007-04-05 17:00,2007-03-10 08:00,2007-04-05 17:00,,2007-07-24 08:01,2007-08-21 08:01,,PT_Normal,,,,,1nMCHbqVSM+MQyWVLwoyhw,qdLPj4way0ahMpB436jCux,,,N,0,0,,,2007-02-01 02:41,2007-02-04 01:00,hbe4678,hbe4678,2007-03-10 08:00,2007-04-05 17:00,192
608,12456789,14517,6815915,13329,1,0,N,N,N,CP_Units,TT_Task,DT_FixedDUR2,RV_OK,TK_NotStart,CO01CC0130,01C Install Paving,,1280.01666666667,328,96,0,0,0,96,0,0,0,,,,2007-11-22 08:01,2007-12-06 08:01,,2007-04-28 08:00,2007-05-10 17:00,2007-04-28 08:00,2007-05-10 17:00,2007-04-28 08:00,2007-05-10 17:00,,2007-11-22 08:01,2007-12-06 08:01,,PT_Normal,,,,,Ni52JMxERlSCadib8g3SJA,jegA3jwSo0WgnccHlCERVh,,,N,0,0,,,2007-02-01 02:41,2007-02-04 01:00,hbe4678,hbe4678,2007-04-28 08:00,2007-05-10 17:00,96
609,12456790,14517,6815915,13329,1,0,N,N,N,CP_Units,TT_Task,DT_FixedDUR2,RV_OK,TK_NotStart,CO01DC0130,01D Install Paving,,576.016666666667,96,96,0,0,0,96,0,0,0,,,,2007-08-27 08:01,2007-09-10 08:01,,2007-06-04 08:00,2007-06-17 17:00,2007-06-04 08:00,2007-06-17 17:00,2007-06-04 08:00,2007-06-17 17:00,,2007-08-27 08:01,2007-09-10 08:01,,PT_Normal,,,,,DQHkRPRvRxSscQlr/TNA3g,5WsDMOSrG0yOQ6WIy893+R,,,N,0,0,,,2007-02-01 02:41,2007-02-04 01:00,hbe4678,hbe4678,2007-06-04 08:00,2007-06-17 17:00,96
610,12456791,14517,6815915,13329,1,0,N,N,N,CP_Units,TT_Task,DT_FixedDUR2,RV_OK,TK_NotStart,CO01GC0130,01G Install Paving - Control Building,,560,840,96,0,0,0,96,0,0,0,,,,2007-11-06 08:00,2007-11-19 17:00,,2007-07-25 08:00,2007-08-07 17:00,2007-07-25 08:00,2007-08-07 17:00,2007-07-25 08:00,2007-08-07 17:00,,2007-11-06 08:00,2007-11-19 17:00,,PT_Normal,,,,,h8na9SjnT52Qq2YsX49dFA,p8/fWkC4IECr2+PaaTOH1R,,,N,0,0,,,2007-02-01 02:41,2007-02-01 02:43,hbe4678,hbe4678,2007-07-25 08:00,2007-08-07 17:00,96
611,12456792,14517,6815915,13329,1,0,N,N,N,CP_Units,TT_Task,DT_FixedDUR2,RV_OK,TK_NotStart,CO01YC0130,01Y Install Paving,,1072,568,144,0,0,0,144,0,0,0,,,,2007-08-13 08:00,2007-09-02 17:00,,2007-03-10 08:00,2007-03-29 17:00,2007-03-10 08:00,2007-03-29 17:00,2007-03-10 08:00,2007-03-29 17:00,,2007-08-13 08:00,2007-09-02 17:00,,PT_Normal,,,,,+4/RJaArQj+RqTDup0xAhA,+q91ZK75pkmwIAt6kafrsx,,,N,0,0,,,2007-02-01 02:41,2007-02-01 02:43,hbe4678,hbe4678,2007-03-10 08:00,2007-03-29 17:00,144
612,12456793,14517,6815915,13329,1,0,N,N,N,CP_Units,TT_Task,DT_FixedDUR2,RV_OK,TK_NotStart,CO01FC0135,01F Install Paving - Mosque,,1624.01666666667,408,144,0,0,0,144,0,0,0,,,,2008-02-18 08:01,2008-03-10 08:01,,2007-05-29 08:00,2007-06-18 17:00,2007-05-29 08:00,2007-06-18 17:00,2007-05-29 08:00,2007-06-18 17:00,,2008-02-18 08:01,2008-03-10 08:01,,PT_Normal,,,,,5hljIhraRTaai482U7DbSg,Z7vu0aSnQPaJ2EPH2glEOA,,,N,0,0,,,2007-02-01 02:41,2007-02-04 01:00,hbe4678,hbe4678,2007-05-29 08:00,2007-06-18 17:00,144
613,12456794,14517,6815915,13329,1,0,N,N,N,CP_Units,TT_Task,DT_FixedDUR2,RV_OK,TK_NotStart,CO01EC0135,01E Install Paving - Guard House,,2280.01666666667,840,96,0,0,0,96,0,0,0,,,,2008-03-29 08:01,2008-04-12 08:01,,2007-04-03 08:00,2007-04-16 17:00,2007-04-03 08:00,2007-04-16 17:00,2007-04-03 08:00,2007-04-16 17:00,,2008-03-29 08:01,2008-04-12 08:01,,PT_Normal,,,,,hMfGxlKnTQmUGVFOCxBJcA,CfUOyBWbSuy1sJP5j964Ig,,,N,0,0,,,2007-02-01 02:41,2007-02-04 01:00,hbe4678,hbe4678,2007-04-03 08:00,2007-04-16 17:00,96
614,12456795,14517,6815915,13329,1,0,N,N,N,CP_Units,TT_WBS,DT_FixedDUR2,RV_OK,TK_NotStart,WO010C0110,010 Concrete Paving,1355,1504.01666666667,4032,1040,0,4580.1,4580.1,1040,0,0,0,,,,2007-08-13 08:00,2008-04-12 08:01,,2007-03-10 08:00,2007-08-07 17:00,2007-03-10 08:00,2007-08-07 17:00,2007-03-10 08:00,2007-08-07 17:00,,2007-08-13 08:00,2008-04-12 08:01,,PT_Normal,,,,,z91Go5oySeWhUxd/S6H+TQ,RxK3PsvtR1eT+ibDI1SrUA,,,N,0,0,,,2007-02-01 02:41,2007-02-04 01:05,hbe4678,hbe4678,2007-03-10 08:00,2007-08-07 17:00,1040
615,12456796,14517,6815916,13329,1,0,N,N,N,CP_Units,TT_Task,DT_FixedDUR2,RV_OK,TK_Active,CO000C0150,Perimeter Wall,,216,0,632,0,0,0,2144,0,0,0,,2006-01-15 00:00,,2007-02-27 08:00,2007-05-29 17:00,2007-04-28 17:00,2007-01-27 08:00,2007-04-28 17:00,2007-01-27 08:00,2007-04-28 17:00,2006-03-12 08:00,2007-02-14 17:00,,2007-02-27 08:00,2007-05-29 17:00,,PT_Normal,,,,,1aIKMDgTSC2T7vqWgwbNig,4o8g9R4biEKhaBTC5ghX2R,,,N,0,0,,,2007-02-01 02:41,2007-02-01 02:43,hbe4678,hbe4678,2007-01-27 08:00,2007-04-28 17:00,632
616,12456797,14517,6815916,13329,1,0,N,N,N,CP_Units,TT_WBS,DT_FixedDUR2,RV_OK,TK_Active,WO010K0110,010 Site Prep - Perimeter Wall,1351,216,4728,632,128331.99,32083,160414.99,2144,0,0,0,,2006-01-15 00:00,,2007-02-27 08:00,2007-05-29 17:00,,2007-01-27 08:00,2007-04-28 17:00,2007-01-27 08:00,2007-04-28 17:00,2006-03-12 08:00,2007-02-14 17:00,,2007-02-27 08:00,2007-05-29 17:00,,PT_Normal,,,,,O5tBp6jIT+qa4/EWIsBejQ,gMWPvkXKS2uR5I4NrC4q6w,,,N,0,0,,,2007-02-01 02:41,2007-02-04 01:05,hbe4678,hbe4678,2007-01-27 08:00,2007-04-28 17:00,632
617,12456798,14517,6815918,13332,0,0,N,N,N,CP_Units,TT_FinMile,DT_FixedDUR2,RV_OK,TK_NotStart,SC02QT0120,02Q RFSU,,592.016666666667,1064,0,0,0,0,0,0,0,0,,,,2008-04-12 08:01,2008-04-12 08:01,,2008-01-28 17:00,2008-01-28 17:00,2008-01-28 17:00,2008-01-28 17:00,2008-01-28 17:00,2008-01-28 17:00,,2008-04-12 08:01,2008-04-12 08:01,,PT_Normal,,,,,iquzxvQ6Qe2BpsHHgczIwQ,WNfU4Nck/kCytNHq990Vqx,,,N,0,0,,,2007-02-01 02:41,2007-02-04 01:00,hbe4678,hbe4678,2008-01-28 17:00,2008-01-28 17:00,0
618,12456799,14517,6815918,13329,0,0,N,N,N,CP_Units,TT_FinMile,DT_FixedDUR2,RV_OK,TK_NotStart,CO02YT0110,02Y Mechanical Completion,,472.016666666667,48,0,0,0,0,0,0,0,0,,,,2008-04-12 08:01,2008-04-12 08:01,,2008-02-02 17:00,2008-02-02 17:00,2008-02-02 17:00,2008-02-02 17:00,2008-02-02 17:00,2008-02-02 17:00,,2008-04-12 08:01,2008-04-12 08:01,,PT_Normal,,,,,jt2J1tb9RFG7c+KgsrAo1A,FHmZMSOPt0KiDKIwrFHjrx,,,N,0,0,,,2007-02-01 02:41,2007-02-04 01:00,hbe4678,hbe4678,2008-02-02 17:00,2008-02-02 17:00,0
619,12456800,14517,6815918,13332,0,0,N,N,N,CP_Units,TT_FinMile,DT_FixedDUR2,RV_OK,TK_NotStart,SC02YT0120,02Y RFSU,,496.016666666667,968,0,0,0,0,0,0,0,0,,,,2008-04-12 08:01,2008-04-12 08:01,,2008-02-09 17:00,2008-02-09 17:00,2008-02-09 17:00,2008-02-09 17:00,2008-02-09 17:00,2008-02-09 17:00,,2008-04-12 08:01,2008-04-12 08:01,,PT_Normal,,,,,lswzhHwXRJKx34LteTP+Bg,Yu/U42dSFk6Oz6hfbriDYB,,,N,0,0,,,2007-02-01 02:41,2007-02-04 01:00,hbe4678,hbe4678,2008-02-09 17:00,2008-02-09 17:00,0
620,12456801,14517,6815918,13332,0,0,N,N,N,CP_Units,TT_FinMile,DT_FixedDUR2,RV_OK,TK_NotStart,SC02UT0120,02U RFSU,,3040.01666666667,3512,0,0,0,0,0,0,0,0,,,,2008-04-12 08:01,2008-04-12 08:01,,2007-03-28 17:00,2007-03-28 17:00,2007-03-28 17:00,2007-03-28 17:00,2007-03-28 17:00,2007-03-28 17:00,,2008-04-12 08:01,2008-04-12 08:01,,PT_Normal,,,,,KlhQkr5GSQiSfeNuQrYPsg,Gg/QkwWVFUuTgeEUV6qVbB,,,N,0,0,,,2007-02-01 02:41,2007-02-04 01:00,hbe4678,hbe4678,2007-03-28 17:00,2007-03-28 17:00,0
621,12456802,14517,6815918,13329,0,0,N,N,N,CP_Units,TT_FinMile,DT_FixedDUR2,RV_OK,TK_NotStart,CO02HT0110,02H Mechanical Completion,,120.016666666667,40,0,0,0,0,0,0,0,0,,,,2008-04-12 08:01,2008-04-12 08:01,,2008-03-24 17:00,2008-03-24 17:00,2008-03-24 17:00,2008-03-24 17:00,2008-03-24 17:00,2008-03-24 17:00,,2008-04-12 08:01,2008-04-12 08:01,,PT_Normal,,,,,2wQmnPlhTgyH6nIkHBtz/w,rJwk6+YzukaQTUftcGS+/h,,,N,0,0,,,2007-02-01 02:41,2007-02-04 01:00,hbe4678,hbe4678,2008-03-24 17:00,2008-03-24 17:00,0
622,12456803,14517,6815918,13332,0,0,N,N,N,CP_Units,TT_FinMile,DT_FixedDUR2,RV_OK,TK_NotStart,SC02HT0120,02H RFSU,,96.0166666666667,568,0,0,0,0,0,0,0,0,,,,2008-04-12 08:01,2008-04-12 08:01,,2008-03-30 17:00,2008-03-30 17:00,2008-03-30 17:00,2008-03-30 17:00,2008-03-30 17:00,2008-03-30 17:00,,2008-04-12 08:01,2008-04-12 08:01,,PT_Normal,,,,,0geinyA5Qq6VVx357nnltQ,D2/KmkwzQkuMc7nDcRvywh,,,N,0,0,,,2007-02-01 02:41,2007-02-04 01:00,hbe4678,hbe4678,2008-03-30 17:00,2008-03-30 17:00,0
623,12456804,14517,6815918,13329,0,0,N,N,N,CP_Units,TT_FinMile,DT_FixedDUR2,RV_OK,TK_NotStart,CO02CT0110,02C Mechanical Completion,,504.016666666667,176,0,0,0,0,0,0,0,0,,,,2008-04-12 08:01,2008-04-12 08:01,,2008-01-28 17:00,2008-01-28 17:00,2008-01-28 17:00,2008-01-28 17:00,2008-01-28 17:00,2008-01-28 17:00,,2008-04-12 08:01,2008-04-12 08:01,,PT_Normal,,,,,QVCjKlDdQBuD7Ky7qQqAYw,olUsXkfUMUKAlrigczK8TR,,,N,0,0,,,2007-02-01 02:41,2007-02-04 01:00,hbe4678,hbe4678,2008-01-28 17:00,2008-01-28 17:00,0
624,12456805,14517,6815918,13332,0,0,N,N,N,CP_Units,TT_FinMile,DT_FixedDUR2,RV_OK,TK_NotStart,SC02CT0120,02C RFSU,,384.016666666667,856,0,0,0,0,0,0,0,0,,,,2008-04-12 08:01,2008-04-12 08:01,,2008-02-23 17:00,2008-02-23 17:00,2008-02-23 17:00,2008-02-23 17:00,2008-02-23 17:00,2008-02-23 17:00,,2008-04-12 08:01,2008-04-12 08:01,,PT_Normal,,,,,XsYLyVu+StqaOkh/dHPyOw,jt45OyA93EK3ctfjYQfXLh,,,N,0,0,,,2007-02-01 02:41,2007-02-04 01:00,hbe4678,hbe4678,2008-02-23 17:00,2008-02-23 17:00,0
625,12456806,14517,6815918,13329,0,0,N,N,N,CP_Units,TT_FinMile,DT_FixedDUR2,RV_OK,TK_NotStart,CO02UDT110,02U Mechanical Completion,,2408.01666666667,0,0,0,0,0,0,0,0,0,,,,2008-04-12 08:01,2008-04-12 08:01,,2007-03-28 17:00,2007-03-28 17:00,2007-03-28 17:00,2007-03-28 17:00,2007-03-28 17:00,2007-03-28 17:00,,2008-04-12 08:01,2008-04-12 08:01,,PT_Normal,,,,,sul5mFFIQRSBR1zB/ATx+w,alUULORwXUiuKZpdsvTDzR,,,N,0,0,,,2007-02-01 02:41,2007-02-04 01:00,hbe4678,hbe4678,2007-03-28 17:00,2007-03-28 17:00,0
626,12456807,14517,6815918,13332,0,0,N,N,N,CP_Units,TT_FinMile,DT_FixedDUR2,RV_OK,TK_NotStart,SC02AT0120,02A RFSU,,480.016666666667,952,0,0,0,0,0,0,0,0,,,,2008-04-12 08:01,2008-04-12 08:01,,2008-02-11 17:00,2008-02-11 17:00,2008-02-11 17:00,2008-02-11 17:00,2008-02-11 17:00,2008-02-11 17:00,,2008-04-12 08:01,2008-04-12 08:01,,PT_Normal,,,,,y7hMHptyR8OaWKbdqTL/TA,jt45OyA93EK3ctfjYQfXLh,,,N,0,0,,,2007-02-01 02:41,2007-02-04 01:00,hbe4678,hbe4678,2008-02-11 17:00,2008-02-11 17:00,0
627,12456808,14517,6815918,13329,0,0,N,N,N,CP_Units,TT_FinMile,DT_FixedDUR2,RV_OK,TK_NotStart,CO02BT0110,02B Mechanical Completion,,600.016666666667,24,0,0,0,0,0,0,0,0,,,,2008-04-12 08:01,2008-04-12 08:01,,2008-01-14 17:00,2008-01-14 17:00,2008-01-14 17:00,2008-01-14 17:00,2008-01-14 17:00,2008-01-14 17:00,,2008-04-12 08:01,2008-04-12 08:01,,PT_Normal,,,,,NX/4IeMlSGie4Vjlr7WB5w,Qnnpi/BykUCX4dtZG2SGGx,,,N,0,0,,,2007-02-01 02:41,2007-02-04 01:00,hbe4678,hbe4678,2008-01-14 17:00,2008-01-14 17:00,0
628,12456809,14517,6815918,13332,0,0,N,N,N,CP_Units,TT_FinMile,DT_FixedDUR2,RV_OK,TK_NotStart,SC02BT0120,02B RFSU,,680.016666666667,1152,0,0,0,0,0,0,0,0,,,,2008-04-12 08:01,2008-04-12 08:01,,2008-01-17 17:00,2008-01-17 17:00,2008-01-17 17:00,2008-01-17 17:00,2008-01-17 17:00,2008-01-17 17:00,,2008-04-12 08:01,2008-04-12 08:01,,PT_Normal,,,,,pzb5duHwTYCINvTkC7xO8w,ZNXWqQoPPku+6Dpibc8DUR,,,N,0,0,,,2007-02-01 02:41,2007-02-04 01:00,hbe4678,hbe4678,2008-01-17 17:00,2008-01-17 17:00,0
629,12456810,14517,6815918,13329,0,0,N,N,N,CP_Units,TT_FinMile,DT_FixedDUR2,RV_OK,TK_NotStart,CO02DT0110,02D Mechanical Completion,,568.016666666667,104,0,0,0,0,0,0,0,0,,,,2008-04-12 08:01,2008-04-12 08:01,,2008-01-19 17:00,2008-01-19 17:00,2008-01-19 17:00,2008-01-19 17:00,2008-01-19 17:00,2008-01-19 17:00,,2008-04-12 08:01,2008-04-12 08:01,,PT_Normal,,,,,S4d4vMEfRl+PXP9rMkD12Q,I+/JiE0HdEecbJjwRFegZR,,,N,0,0,,,2007-02-01 02:41,2007-02-04 01:00,hbe4678,hbe4678,2008-01-19 17:00,2008-01-19 17:00,0
630,12456811,14517,6815918,13332,0,0,N,N,N,CP_Units,TT_FinMile,DT_FixedDUR2,RV_OK,TK_NotStart,SC02DT0120,02D RFSU,,544.016666666667,1016,0,0,0,0,0,0,0,0,,,,2008-04-12 08:01,2008-04-12 08:01,,2008-02-03 17:00,2008-02-03 17:00,2008-02-03 17:00,2008-02-03 17:00,2008-02-03 17:00,2008-02-03 17:00,,2008-04-12 08:01,2008-04-12 08:01,,PT_Normal,,,,,Xf3t9HLISXqtUnvGocVENw,kWepLZGCfkS0GpBxl3qfHh,,,N,0,0,,,2007-02-01 02:41,2007-02-04 01:00,hbe4678,hbe4678,2008-02-03 17:00,2008-02-03 17:00,0
631,12456812,14517,6815918,13329,0,0,N,N,N,CP_Units,TT_FinMile,DT_FixedDUR2,RV_OK,TK_NotStart,CO02ET0110,02E Mechanical Completion,,520.016666666667,144,0,0,0,0,0,0,0,0,,,,2008-04-12 08:01,2008-04-12 08:01,,2008-01-26 17:00,2008-01-26 17:00,2008-01-26 17:00,2008-01-26 17:00,2008-01-26 17:00,2008-01-26 17:00,,2008-04-12 08:01,2008-04-12 08:01,,PT_Normal,,,,,rMVFNYA4QYq+yMTZawNaXw,QrBRw0wZVECjDbT8EsObLB,,,N,0,0,,,2007-02-01 02:41,2007-02-04 01:00,hbe4678,hbe4678,2008-01-26 17:00,2008-01-26 17:00,0
632,12456813,14517,6815918,13332,0,0,N,N,N,CP_Units,TT_FinMile,DT_FixedDUR2,RV_OK,TK_NotStart,SC02ET0120,02E RFSU,,440.016666666667,912,0,0,0,0,0,0,0,0,,,,2008-04-12 08:01,2008-04-12 08:01,,2008-02-16 17:00,2008-02-16 17:00,2008-02-16 17:00,2008-02-16 17:00,2008-02-16 17:00,2008-02-16 17:00,,2008-04-12 08:01,2008-04-12 08:01,,PT_Normal,,,,,C02oBgr9T2GpYupXFMSLBw,3GV/FbHxU0Wtb01Z5MXrtB,,,N,0,0,,,2007-02-01 02:41,2007-02-04 01:00,hbe4678,hbe4678,2008-02-16 17:00,2008-02-16 17:00,0
633,12456814,14517,6815918,13329,0,0,N,N,N,CP_Units,TT_FinMile,DT_FixedDUR2,RV_OK,TK_NotStart,CO02FT0110,02F Mechanical Completion,,480.016666666667,128,0,0,0,0,0,0,0,0,,,,2008-04-12 08:01,2008-04-12 08:01,,2008-01-31 17:00,2008-01-31 17:00,2008-01-31 17:00,2008-01-31 17:00,2008-01-31 17:00,2008-01-31 17:00,,2008-04-12 08:01,2008-04-12 08:01,,PT_Normal,,,,,Xpu1nOYxSM6rjRcTz3NIOg,XASeE5RApEGrHE5vYy8GEB,,,N,0,0,,,2007-02-01 02:41,2007-02-04 01:00,hbe4678,hbe4678,2008-01-31 17:00,2008-01-31 17:00,0
634,12456815,14517,6815918,13332,0,0,N,N,N,CP_Units,TT_FinMile,DT_FixedDUR2,RV_OK,TK_NotStart,SC02FT0120,02F RFSU,,416.016666666667,888,0,0,0,0,0,0,0,0,,,,2008-04-12 08:01,2008-04-12 08:01,,2008-02-19 17:00,2008-02-19 17:00,2008-02-19 17:00,2008-02-19 17:00,2008-02-19 17:00,2008-02-19 17:00,,2008-04-12 08:01,2008-04-12 08:01,,PT_Normal,,,,,BJu88CLyRqWEDDdkHEK9mQ,GsEYrrVcQEi0p4rIeSrdgh,,,N,0,0,,,2007-02-01 02:41,2007-02-04 01:00,hbe4678,hbe4678,2008-02-19 17:00,2008-02-19 17:00,0
635,12456816,14517,6815918,13329,0,0,N,N,N,CP_Units,TT_FinMile,DT_FixedDUR2,RV_OK,TK_NotStart,CO02GT0110,02G Mechanical Completion,,592.016666666667,160,0,0,0,0,0,0,0,0,,,,2008-04-12 08:01,2008-04-12 08:01,,2008-01-15 17:00,2008-01-15 17:00,2008-01-15 17:00,2008-01-15 17:00,2008-01-15 17:00,2008-01-15 17:00,,2008-04-12 08:01,2008-04-12 08:01,,PT_Normal,,,,,XHX7N/WjSeKUeDAAUmAUUg,dSEFE9FnjEate7dtJkrgbx,,,N,0,0,,,2007-02-01 02:41,2007-02-04 01:00,hbe4678,hbe4678,2008-01-15 17:00,2008-01-15 17:00,0
636,12456817,14517,6815918,13332,0,0,N,N,N,CP_Units,TT_FinMile,DT_FixedDUR2,RV_OK,TK_NotStart,SC02GT0120,02G RFSU,,504.016666666667,976,0,0,0,0,0,0,0,0,,,,2008-04-12 08:01,2008-04-12 08:01,,2008-02-08 17:00,2008-02-08 17:00,2008-02-08 17:00,2008-02-08 17:00,2008-02-08 17:00,2008-02-08 17:00,,2008-04-12 08:01,2008-04-12 08:01,,PT_Normal,,,,,6DqD4re0QhipzyIXu74ixw,WZ2p72RdREKTYSA1mCKLuR,,,N,0,0,,,2007-02-01 02:41,2007-02-04 01:00,hbe4678,hbe4678,2008-02-08 17:00,2008-02-08 17:00,0
637,12456818,14517,6815918,13329,0,0,N,N,N,CP_Units,TT_FinMile,DT_FixedDUR2,RV_OK,TK_NotStart,CO02JT0110,02J Mechanical Completion,,512.016666666667,176,0,0,0,0,0,0,0,0,,,,2008-04-12 08:01,2008-04-12 08:01,,2008-01-27 17:00,2008-01-27 17:00,2008-01-27 17:00,2008-01-27 17:00,2008-01-27 17:00,2008-01-27 17:00,,2008-04-12 08:01,2008-04-12 08:01,,PT_Normal,,,,,a22WTmw3QJyucHjmNUmCDg,TtSEpffKT0WYuElzYNfLbh,,,N,0,0,,,2007-02-01 02:41,2007-02-04 01:00,hbe4678,hbe4678,2008-01-27 17:00,2008-01-27 17:00,0
638,12456819,14517,6815918,13332,0,0,N,N,N,CP_Units,TT_FinMile,DT_FixedDUR2,RV_OK,TK_NotStart,SC02JT0120,02J RFSU,,392.016666666667,864,0,0,0,0,0,0,0,0,,,,2008-04-12 08:01,2008-04-12 08:01,,2008-02-22 17:00,2008-02-22 17:00,2008-02-22 17:00,2008-02-22 17:00,2008-02-22 17:00,2008-02-22 17:00,,2008-04-12 08:01,2008-04-12 08:01,,PT_Normal,,,,,3aYr6mdlRTmxoQd9M67v5w,4vT6VNnIbESXm5cfvK8nSh,,,N,0,0,,,2007-02-01 02:41,2007-02-04 01:00,hbe4678,hbe4678,2008-02-22 17:00,2008-02-22 17:00,0
639,12456820,14517,6815918,13329,0,0,N,N,N,CP_Units,TT_FinMile,DT_FixedDUR2,RV_OK,TK_NotStart,CO02KT0110,02K Mechanical Completion,,552.016666666667,168,0,0,0,0,0,0,0,0,,,,2008-04-12 08:01,2008-04-12 08:01,,2008-01-21 17:00,2008-01-21 17:00,2008-01-21 17:00,2008-01-21 17:00,2008-01-21 17:00,2008-01-21 17:00,,2008-04-12 08:01,2008-04-12 08:01,,PT_Normal,,,,,IW7QJOgsRZS6Z+gE0+BeZA,aLzZUBY380KFVJ7N3L3f3R,,,N,0,0,,,2007-02-01 02:41,2007-02-04 01:00,hbe4678,hbe4678,2008-01-21 17:00,2008-01-21 17:00,0
640,12456821,14517,6815918,13332,0,0,N,N,N,CP_Units,TT_FinMile,DT_FixedDUR2,RV_OK,TK_NotStart,SC02KT0120,02K RFSU,,448.016666666667,920,0,0,0,0,0,0,0,0,,,,2008-04-12 08:01,2008-04-12 08:01,,2008-02-15 17:00,2008-02-15 17:00,2008-02-15 17:00,2008-02-15 17:00,2008-02-15 17:00,2008-02-15 17:00,,2008-04-12 08:01,2008-04-12 08:01,,PT_Normal,,,,,j2KF3YBIQTyZWN8xvxEkZQ,AvsddKKauUu3Zs/on2Pt3x,,,N,0,0,,,2007-02-01 02:41,2007-02-04 01:00,hbe4678,hbe4678,2008-02-15 17:00,2008-02-15 17:00,0
641,12456822,14517,6815918,13329,0,0,N,N,N,CP_Units,TT_FinMile,DT_FixedDUR2,RV_OK,TK_NotStart,CO02MT0110,02M Mechanical Completion,,528.016666666667,120,0,0,0,0,0,0,0,0,,,,2008-04-12 08:01,2008-04-12 08:01,,2008-01-24 17:00,2008-01-24 17:00,2008-01-24 17:00,2008-01-24 17:00,2008-01-24 17:00,2008-01-24 17:00,,2008-04-12 08:01,2008-04-12 08:01,,PT_Normal,,,,,hvMknIduQDCZ3th2o23Dlg,d8RuzTlsBUeFMmVdAOKlfx,,,N,0,0,,,2007-02-01 02:41,2007-02-04 01:00,hbe4678,hbe4678,2008-01-24 17:00,2008-01-24 17:00,0
642,12456823,14517,6815918,13332,0,0,N,N,N,CP_Units,TT_FinMile,DT_FixedDUR2,RV_OK,TK_NotStart,SC02MT0120,02M RFSU,,480.016666666667,952,0,0,0,0,0,0,0,0,,,,2008-04-12 08:01,2008-04-12 08:01,,2008-02-11 17:00,2008-02-11 17:00,2008-02-11 17:00,2008-02-11 17:00,2008-02-11 17:00,2008-02-11 17:00,,2008-04-12 08:01,2008-04-12 08:01,,PT_Normal,,,,,eZDBHvUEQW2XxSmfrICB6w,py8yn8QcJ0Gzv+ypPKKkJx,,,N,0,0,,,2007-02-01 02:41,2007-02-04 01:00,hbe4678,hbe4678,2008-02-11 17:00,2008-02-11 17:00,0
643,12456824,14517,6815918,13329,0,0,N,N,N,CP_Units,TT_FinMile,DT_FixedDUR2,RV_OK,TK_NotStart,CO02NT0110,02N Mechanical Completion,,552.016666666667,104,0,0,0,0,0,0,0,0,,,,2008-04-12 08:01,2008-04-12 08:01,,2008-01-21 17:00,2008-01-21 17:00,2008-01-21 17:00,2008-01-21 17:00,2008-01-21 17:00,2008-01-21 17:00,,2008-04-12 08:01,2008-04-12 08:01,,PT_Normal,,,,,/iQzNQY8T1urCj7CqEe0tA,EmZ6wdkQNk2l2+szLuQ2lh,,,N,0,0,,,2007-02-01 02:41,2007-02-04 01:00,hbe4678,hbe4678,2008-01-21 17:00,2008-01-21 17:00,0
644,12456825,14517,6815918,13332,0,0,N,N,N,CP_Units,TT_FinMile,DT_FixedDUR2,RV_OK,TK_NotStart,SC02NT0120,02N RFSU,,528.016666666667,1000,0,0,0,0,0,0,0,0,,,,2008-04-12 08:01,2008-04-12 08:01,,2008-02-05 17:00,2008-02-05 17:00,2008-02-05 17:00,2008-02-05 17:00,2008-02-05 17:00,2008-02-05 17:00,,2008-04-12 08:01,2008-04-12 08:01,,PT_Normal,,,,,q2TSAPi8SMqlJxMTmgcvfw,rU0+uizBjU+flF2ET0cRnB,,,N,0,0,,,2007-02-01 02:41,2007-02-04 01:00,hbe4678,hbe4678,2008-02-05 17:00,2008-02-05 17:00,0
645,12456826,14517,6815918,13329,0,0,N,N,N,CP_Units,TT_FinMile,DT_FixedDUR2,RV_OK,TK_NotStart,CO02PT0110,02P Mechanical Completion,,544.016666666667,32,0,0,0,0,0,0,0,0,,,,2008-04-12 08:01,2008-04-12 08:01,,2008-01-22 17:00,2008-01-22 17:00,2008-01-22 17:00,2008-01-22 17:00,2008-01-22 17:00,2008-01-22 17:00,,2008-04-12 08:01,2008-04-12 08:01,,PT_Normal,,,,,o/Hyie1qQ66ZSF7bfPTESQ,C30pcOc5Pka79AUu9ti+ex,,,N,0,0,,,2007-02-01 02:41,2007-02-04 01:00,hbe4678,hbe4678,2008-01-22 17:00,2008-01-22 17:00,0
646,12456827,14517,6815918,13332,0,0,N,N,N,CP_Units,TT_FinMile,DT_FixedDUR2,RV_OK,TK_NotStart,SC02PT0120,02P RFSU,,600.016666666667,1072,0,0,0,0,0,0,0,0,,,,2008-04-12 08:01,2008-04-12 08:01,,2008-01-27 17:00,2008-01-27 17:00,2008-01-27 17:00,2008-01-27 17:00,2008-01-27 17:00,2008-01-27 17:00,,2008-04-12 08:01,2008-04-12 08:01,,PT_Normal,,,,,UIuA0ZfCSJm6IgvhwHDClQ,CdUJGvtonUe6R39geJ3Wjx,,,N,0,0,,,2007-02-01 02:41,2007-02-04 01:00,hbe4678,hbe4678,2008-01-27 17:00,2008-01-27 17:00,0
647,12456828,14517,6815918,13329,0,0,N,N,N,CP_Units,TT_FinMile,DT_FixedDUR2,RV_OK,TK_NotStart,CO02QT0110,02Q Mechanical Completion,,536.016666666667,32,0,0,0,0,0,0,0,0,,,,2008-04-12 08:01,2008-04-12 08:01,,2008-01-23 17:00,2008-01-23 17:00,2008-01-23 17:00,2008-01-23 17:00,2008-01-23 17:00,2008-01-23 17:00,,2008-04-12 08:01,2008-04-12 08:01,,PT_Normal,,,,,V8mWm7TIQTaImls6T8rowQ,HY/pmLiihEe+3Zt8EOUUux,,,N,0,0,,,2007-02-01 02:41,2007-02-04 01:00,hbe4678,hbe4678,2008-01-23 17:00,2008-01-23 17:00,0
648,12456829,14517,6815918,13329,0,0,N,N,N,CP_Units,TT_FinMile,DT_FixedDUR2,RV_OK,TK_NotStart,CO02LT0110,02L Mechanical Completion,,136.016666666667,184,0,0,0,0,0,0,0,0,,,,2008-04-12 08:01,2008-04-12 08:01,,2008-03-22 17:00,2008-03-22 17:00,2008-03-22 17:00,2008-03-22 17:00,2008-03-22 17:00,2008-03-22 17:00,,2008-04-12 08:01,2008-04-12 08:01,,PT_Normal,,,,,6nPbdtF2R6ie34HZKU3+Wg,,,,N,0,0,,,2007-02-01 02:41,2007-02-04 01:00,hbe4678,hbe4678,2008-03-22 17:00,2008-03-22 17:00,0
649,12456830,14517,6815918,13332,0,0,N,N,N,CP_Units,TT_FinMile,DT_FixedDUR2,RV_OK,TK_NotStart,SC02LT0120,02L RFSU,,-135.983333333333,336,0,0,0,0,0,0,0,0,,,,2008-04-12 08:01,2008-04-12 08:01,,2008-04-28 17:00,2008-04-28 17:00,2008-04-28 17:00,2008-04-28 17:00,2008-04-28 17:00,2008-04-28 17:00,,2008-04-12 08:01,2008-04-12 08:01,,PT_Normal,,,,,DUhCGkIbTJa0Lp/4Qr7lZA,,,,N,0,0,,,2007-02-01 02:41,2007-02-04 01:00,hbe4678,hbe4678,2008-04-28 17:00,2008-04-28 17:00,0
650,12456831,14517,6815918,13329,0,0,N,N,N,CP_Units,TT_FinMile,DT_FixedDUR2,RV_OK,TK_NotStart,CO02AT0110,02A Mechanical Completion,,568.016666666667,160,0,0,0,0,0,0,0,0,,,,2008-04-12 08:01,2008-04-12 08:01,,2008-01-19 17:00,2008-01-19 17:00,2008-01-19 17:00,2008-01-19 17:00,2008-01-19 17:00,2008-01-19 17:00,,2008-04-12 08:01,2008-04-12 08:01,,PT_Normal,,,,,VSBQu/G4TI+nHAkF7u9ZVw,olUsXkfUMUKAlrigczK8TR,,,N,0,0,,,2007-02-01 02:41,2007-02-04 01:00,hbe4678,hbe4678,2008-01-19 17:00,2008-01-19 17:00,0
651,12456832,14517,6815919,13329,1,0,N,N,N,CP_Units,TT_Task,DT_FixedDUR2,RV_OK,TK_Active,CO02HU3110,02H U/G Earthing Installation,,1296.01666666667,336,216,0,0,0,216,0,0,0,,2006-12-23 00:00,,2007-08-20 08:01,2007-09-29 08:01,,2007-02-12 08:00,2007-03-14 17:00,2007-02-12 08:00,2007-03-14 17:00,2007-02-12 08:00,2007-03-14 17:00,,2007-08-20 08:01,2007-09-29 08:01,,PT_Normal,,,,,DHjYagqGT4y0y7vG2fiMcQ,k1NeDkfhs0SxSGkfZhM1rx,,,N,0,0,,,2007-02-01 02:41,2007-02-04 01:00,hbe4678,hbe4678,2007-02-12 08:00,2007-03-14 17:00,216
652,12456833,14517,6815919,13329,1,0,N,N,N,CP_Units,TT_Task,DT_FixedDUR2,RV_OK,TK_NotStart,CO02CU3110,02C U/G Earthing Installation,,1344.01666666667,48,208,0,0,0,208,0,0,0,,,,2007-08-28 08:01,2007-10-20 08:01,,2007-02-13 08:00,2007-03-14 17:00,2007-02-13 08:00,2007-03-14 17:00,2007-02-13 08:00,2007-03-14 17:00,,2007-08-28 08:01,2007-10-20 08:01,,PT_Normal,,,,,pyIAHzUJQWWBzQ6ax+LpDw,yhBCgGIGSki33lL7cjS7YR,,,N,0,0,,,2007-02-01 02:41,2007-02-04 01:00,hbe4678,hbe4678,2007-02-13 08:00,2007-03-14 17:00,208
653,12456834,14517,6815919,13329,1,0,N,N,N,CP_Units,TT_Task,DT_FixedDUR2,RV_OK,TK_Active,CO02LU3110,02L U/G Earthing Installation,,1032.01666666667,48,192,0,0,0,192,0,0,0,,2006-12-23 00:00,,2007-07-16 08:01,2007-08-13 08:01,,2007-02-15 08:00,2007-03-14 17:00,2007-02-15 08:00,2007-03-14 17:00,2007-02-15 08:00,2007-03-14 17:00,,2007-07-16 08:01,2007-08-13 08:01,,PT_Normal,,,,,TVDxgrBuQ6CrGg35tgIUfg,,,,N,0,0,,,2007-02-01 02:41,2007-02-04 01:00,hbe4678,hbe4678,2007-02-15 08:00,2007-03-14 17:00,192
654,12456835,14517,6815919,13329,1,0,N,N,N,CP_Units,TT_Task,DT_FixedDUR2,RV_OK,TK_NotStart,CO02AU3110,02A U/G Earthing Installation,,1824.01666666667,312,120,0,0,0,120,0,0,0,,,,2007-12-04 08:01,2007-12-27 08:01,,2007-02-19 08:00,2007-03-07 17:00,2007-02-19 08:00,2007-03-07 17:00,2007-02-19 08:00,2007-03-07 17:00,,2007-12-04 08:01,2007-12-27 08:01,,PT_Normal,,,,,uJbJQZp9Q/+dfCFwajWhrg,yhBCgGIGSki33lL7cjS7YR,,,N,0,0,,,2007-02-01 02:41,2007-02-04 01:00,hbe4678,hbe4678,2007-02-19 08:00,2007-03-07 17:00,120
655,12456836,14517,6815919,13329,1,0,N,N,N,CP_Units,TT_WBS,DT_FixedDUR2,RV_OK,TK_Active,WO020U3100,020 Install U/G Electrical,1348,2120.01666666667,4840,520,90,5740.98,5830.98,712,0,0,0,,2006-12-23 00:00,,2007-05-23 08:00,2008-03-15 08:01,,2007-01-27 08:00,2007-04-11 17:00,2007-01-27 08:00,2007-04-11 17:00,2007-01-06 08:00,2007-04-18 17:00,,2007-05-23 08:00,2008-03-15 08:01,,PT_Normal,,,,,VLXFsercRBy+J3uiflN3Jw,FHu1riVduEKhevqgdw94eR,,,N,0,0,,,2007-02-01 02:41,2007-02-04 01:05,hbe4678,hbe4678,2007-01-27 08:00,2007-04-11 17:00,520
656,12456837,14517,6815919,13329,1,0,N,N,N,CP_Units,TT_Task,DT_FixedDUR2,RV_OK,TK_NotStart,CO02BU3110,02B U/G Earthing Installation,,2312.01666666667,632,24,0,0,0,24,0,0,0,,,,2008-03-11 08:01,2008-03-15 08:01,,2007-03-12 08:00,2007-03-14 17:00,2007-03-12 08:00,2007-03-14 17:00,2007-03-12 08:00,2007-03-14 17:00,,2008-03-11 08:01,2008-03-15 08:01,,PT_Normal,,,,,bHfc0PlTS/SCIaEq0CLYnA,JD+tQYLtKkOTNpMtRsMUDB,,,N,0,0,,,2007-02-01 02:41,2007-02-04 01:00,hbe4678,hbe4678,2007-03-12 08:00,2007-03-14 17:00,24
657,12456838,14517,6815919,13329,1,0,N,N,N,CP_Units,TT_Task,DT_FixedDUR2,RV_OK,TK_NotStart,CO02DU3110,02D U/G Earthing Installation,,1984,584,80,0,0,0,80,0,0,0,,,,2008-01-15 08:00,2008-01-26 17:00,,2007-03-04 08:00,2007-03-14 17:00,2007-03-04 08:00,2007-03-14 17:00,2007-03-04 08:00,2007-03-14 17:00,,2008-01-15 08:00,2008-01-26 17:00,,PT_Normal,,,,,UMP4twFGSkqneHZU1kTLsg,pFCwPoZOcEK7627TzjPnmR,,,N,0,0,,,2007-02-01 02:41,2007-02-01 02:43,hbe4678,hbe4678,2007-03-04 08:00,2007-03-14 17:00,80
658,12456839,14517,6815919,13329,1,0,N,N,N,CP_Units,TT_Task,DT_FixedDUR2,RV_OK,TK_Active,CO02EU3110,02E U/G Earthing Installation,,1816.01666666667,440,112,0,0,0,112,0,0,0,,2006-12-23 00:00,,2007-12-11 08:01,2008-01-02 08:01,,2007-02-27 08:00,2007-03-14 17:00,2007-02-27 08:00,2007-03-14 17:00,2007-02-27 08:00,2007-03-14 17:00,,2007-12-11 08:01,2008-01-02 08:01,,PT_Normal,,,,,zg/GFTHFQUuYArp+PrJ+JA,ExxDaDsgl0KNlJ/NVgxN8R,,,N,0,0,,,2007-02-01 02:41,2007-02-04 01:00,hbe4678,hbe4678,2007-02-27 08:00,2007-03-14 17:00,112
659,12456840,14517,6815919,13329,1,0,N,N,N,CP_Units,TT_Task,DT_FixedDUR2,RV_OK,TK_NotStart,CO02FU3110,02F U/G Earthing Installation,,1872.01666666667,488,104,0,0,0,104,0,0,0,,,,2007-12-26 08:01,2008-01-10 08:01,,2007-02-28 08:00,2007-03-14 17:00,2007-02-28 08:00,2007-03-14 17:00,2007-02-28 08:00,2007-03-14 17:00,,2007-12-26 08:01,2008-01-10 08:01,,PT_Normal,,,,,xUm2i0rxRgSeUAMAlln4vQ,XHh9URaoMkik8TuC7ccemB,,,N,0,0,,,2007-02-01 02:41,2007-02-04 01:00,hbe4678,hbe4678,2007-02-28 08:00,2007-03-14 17:00,104
660,12456841,14517,6815919,13329,1,0,N,N,N,CP_Units,TT_Task,DT_FixedDUR2,RV_OK,TK_Active,CO02GU3110,02G U/G Earthing Installation,,1272.01666666667,0,184,0,0,0,184,0,0,0,,2006-12-23 00:00,,2007-09-24 08:01,2007-11-06 08:01,,2007-03-17 08:00,2007-04-11 17:00,2007-03-17 08:00,2007-04-11 17:00,2007-03-24 08:00,2007-04-18 17:00,,2007-09-24 08:01,2007-11-06 08:01,,PT_Normal,,,,,Jq6T1tmlSfiGq+cZvN5wiw,XRuZ+S2MVESIcIk2z14RVh,,,N,0,0,,,2007-02-01 02:41,2007-02-04 01:00,hbe4678,hbe4678,2007-03-17 08:00,2007-04-11 17:00,184
661,12456842,14517,6815919,13329,1,0,N,N,N,CP_Units,TT_Task,DT_FixedDUR2,RV_OK,TK_Active,CO02JU3110,02J U/G Earthing Installation,,1688.01666666667,344,136,0,0,0,136,0,0,0,,2006-12-23 00:00,,2007-11-19 08:01,2007-12-09 08:01,,2007-02-24 08:00,2007-03-14 17:00,2007-02-24 08:00,2007-03-14 17:00,2007-02-24 08:00,2007-03-14 17:00,,2007-11-19 08:01,2007-12-09 08:01,,PT_Normal,,,,,eucmbCCAQZGFPGjPJK6CKA,XM5xF11WpEyAqYY3jWrmRh,,,N,0,0,,,2007-02-01 02:41,2007-02-04 01:00,hbe4678,hbe4678,2007-02-24 08:00,2007-03-14 17:00,136
662,12456843,14517,6815919,13329,1,0,N,N,N,CP_Units,TT_Task,DT_FixedDUR2,RV_OK,TK_NotStart,CO02KU3110,02K U/G Earthing Installation,,1712.01666666667,392,128,0,0,0,128,0,0,0,,,,2007-11-24 08:01,2007-12-12 08:01,,2007-02-25 08:00,2007-03-14 17:00,2007-02-25 08:00,2007-03-14 17:00,2007-02-25 08:00,2007-03-14 17:00,,2007-11-24 08:01,2007-12-12 08:01,,PT_Normal,,,,,8+Lgd7ThSe+x1NC0KPBs3A,aApgZdyFy0udhdQFJjL85B,,,N,0,0,,,2007-02-01 02:41,2007-02-04 01:00,hbe4678,hbe4678,2007-02-25 08:00,2007-03-14 17:00,128
663,12456844,14517,6815919,13329,1,0,N,N,N,CP_Units,TT_Task,DT_FixedDUR2,RV_OK,TK_Active,CO02MU3110,02M U/G Earthing Installation,,1912.01666666667,536,96,0,0,0,96,0,0,0,,2006-12-23 00:00,,2008-01-02 08:01,2008-01-16 08:01,,2007-03-01 08:00,2007-03-14 17:00,2007-03-01 08:00,2007-03-14 17:00,2007-03-01 08:00,2007-03-14 17:00,,2008-01-02 08:01,2008-01-16 08:01,,PT_Normal,,,,,xOF/i5kmSlmR/677BX13CQ,KnCIhwD0rEKo5nIQhHJWMR,,,N,0,0,,,2007-02-01 02:41,2007-02-04 01:00,hbe4678,hbe4678,2007-03-01 08:00,2007-03-14 17:00,96
664,12456845,14517,6815919,13329,1,0,N,N,N,CP_Units,TT_Task,DT_FixedDUR2,RV_OK,TK_Active,CO02YU3110,02Y U/G Earthing Installation,,800,0,232,0,0,0,480,0,0,0,,2006-12-23 00:00,,2007-05-23 08:00,2007-06-25 17:00,2007-02-28 17:00,2007-01-27 08:00,2007-02-28 17:00,2007-01-27 08:00,2007-02-28 17:00,2007-01-06 08:00,2007-03-15 17:00,,2007-05-23 08:00,2007-06-25 17:00,,PT_Normal,,,,,+3ohJUWhQ12Rx0QNLsRC7w,HnvyidWbYUmPLSsUV71JjR,,,N,0,0,,,2007-02-01 02:41,2007-02-01 02:43,hbe4678,hbe4678,2007-01-27 08:00,2007-02-28 17:00,232
665,12456846,14517,6815920,13329,1,0,N,N,N,CP_Units,TT_Task,DT_FixedDUR2,RV_OK,TK_Active,CO02AU4120,02A U/G Piping Installation,,1776.01666666667,0,232,0,0,0,240,0,0,0,,2006-12-20 00:00,,2007-11-04 08:01,2007-12-08 08:01,2007-02-28 17:00,2007-01-27 08:00,2007-02-28 17:00,2007-01-27 08:00,2007-02-28 17:00,2007-01-06 08:00,2007-02-08 17:00,,2007-11-04 08:01,2007-12-08 08:01,,PT_Normal,,,,,gyp+gpeaS0qNPDI0BKKdrw,71CWaDc+iEm4F6S19wTJ2h,,,N,0,0,,,2007-02-01 02:41,2007-02-04 01:00,hbe4678,hbe4678,2007-01-27 08:00,2007-02-28 17:00,232
666,12456847,14517,6815920,13329,1,0,N,N,N,CP_Units,TT_WBS,DT_FixedDUR2,RV_OK,TK_Active,WO020U4100,020 U/G Piping Installation,1348,1792,4936,424,56428.19,141735.74,198163.93,1296,0,0,0,,2006-09-22 00:00,,2007-04-19 08:00,2008-01-12 17:00,,2007-01-27 08:00,2007-03-28 17:00,2007-01-27 08:00,2007-03-28 17:00,2006-09-25 08:00,2007-04-28 17:00,,2007-04-19 08:00,2008-01-12 17:00,,PT_Normal,,,,,yV8JH8opT1iijSTMf406KQ,gLJk405sNkmlQAOTrzQAgB,,,N,0,0,,,2007-02-01 02:41,2007-02-04 01:05,hbe4678,hbe4678,2007-01-27 08:00,2007-03-28 17:00,424
667,12456848,14517,6815920,13329,1,0,N,N,N,CP_Units,TT_Task,DT_FixedDUR2,RV_OK,TK_NotStart,CO02LU4120,02L U/G Piping Installation,,984.016666666667,0,192,0,0,0,192,0,0,0,2007-02-28 17:00,,,2007-06-25 08:01,2007-07-23 08:01,,2007-02-01 08:00,2007-02-28 17:00,2007-02-01 08:00,2007-02-28 17:00,2007-02-01 08:00,2007-02-28 17:00,,2007-06-25 08:01,2007-07-23 08:01,CS_MEOA,PT_Normal,,,,,ddfNGPcITkSL/SIhkXbSVA,,,,N,0,0,,,2007-02-01 02:41,2007-02-04 01:00,hbe4678,hbe4678,2007-02-01 08:00,2007-02-28 17:00,192
668,12456849,14517,6815920,13329,1,0,N,N,N,CP_Units,TT_Task,DT_FixedDUR2,RV_OK,TK_Active,CO02BU4120,02B U/G Piping Installation,,1752.01666666667,0,232,0,0,0,48,0,0,0,,2006-12-20 00:00,,2007-10-31 08:01,2007-12-04 08:01,2007-02-28 17:00,2007-01-27 08:00,2007-02-28 17:00,2007-01-27 08:00,2007-02-28 17:00,2007-01-06 08:00,2007-01-11 17:00,,2007-10-31 08:01,2007-12-04 08:01,,PT_Normal,,,,,ad5J8+iBRHiOFLnOJ7tm5Q,cwrAcHMiYkegDgSu57jTHh,,,N,0,0,,,2007-02-01 02:41,2007-02-04 01:00,hbe4678,hbe4678,2007-01-27 08:00,2007-02-28 17:00,232
669,12456850,14517,6815920,13329,1,0,N,N,N,CP_Units,TT_Task,DT_FixedDUR2,RV_OK,TK_Active,CO02DU4120,02D U/G Piping Installation,,1984,0,232,0,0,0,160,0,0,0,,2006-12-20 00:00,,2007-12-04 08:00,2008-01-12 17:00,2007-02-28 17:00,2007-01-27 08:00,2007-02-28 17:00,2007-01-27 08:00,2007-02-28 17:00,2007-02-25 08:00,2007-03-19 17:00,,2007-12-04 08:00,2008-01-12 17:00,,PT_Normal,,,,,7/oHY9I8T22Zd17lkxj3HA,JtbyfIftO0mjQevtKwxg/R,,,N,0,0,,,2007-02-01 02:41,2007-02-01 02:43,hbe4678,hbe4678,2007-01-27 08:00,2007-02-28 17:00,232
670,12456851,14517,6815920,13329,1,0,N,N,N,CP_Units,TT_Task,DT_FixedDUR2,RV_OK,TK_Active,CO02EU4120,02E U/G Piping Installation,,1816.01666666667,0,232,0,0,0,224,0,0,0,,2006-12-20 00:00,,2007-11-10 08:01,2007-12-13 08:01,2007-02-28 17:00,2007-01-27 08:00,2007-02-28 17:00,2007-01-27 08:00,2007-02-28 17:00,2007-02-25 08:00,2007-03-28 17:00,,2007-11-10 08:01,2007-12-13 08:01,,PT_Normal,,,,,0nCunD6zQdOiucYJ9TGVaA,ExM6vEUJVkuptGkM97WdPx,,,N,0,0,,,2007-02-01 02:41,2007-02-04 01:00,hbe4678,hbe4678,2007-01-27 08:00,2007-02-28 17:00,232
671,12456852,14517,6815920,13329,1,0,N,N,N,CP_Units,TT_Task,DT_FixedDUR2,RV_OK,TK_Active,CO02FU4120,02F U/G Piping Installation,,1872.01666666667,0,232,0,0,0,200,0,0,0,,2006-12-20 00:00,,2007-11-18 08:01,2007-12-27 08:01,2007-02-28 17:00,2007-01-27 08:00,2007-02-28 17:00,2007-01-27 08:00,2007-02-28 17:00,2007-02-25 08:00,2007-03-25 17:00,,2007-11-18 08:01,2007-12-27 08:01,,PT_Normal,,,,,LNx1qDBNSwikzDoG/IaP/Q,Ac1GO7PiW0mvSFBFHhqbWh,,,N,0,0,,,2007-02-01 02:41,2007-02-04 01:00,hbe4678,hbe4678,2007-01-27 08:00,2007-02-28 17:00,232
672,12456853,14517,6815920,13329,1,0,N,N,N,CP_Units,TT_Task,DT_FixedDUR2,RV_OK,TK_Active,CO02GU4120,02G U/G Piping Installation,,1272.01666666667,0,360,0,0,0,360,0,0,0,,2006-12-20 00:00,,2007-08-09 08:01,2007-10-23 08:01,2007-02-28 17:00,2007-02-05 08:00,2007-03-28 17:00,2007-02-05 08:00,2007-03-28 17:00,2007-02-19 08:00,2007-04-11 17:00,,2007-08-09 08:01,2007-10-23 08:01,,PT_Normal,,,,,pPWe13WpSt6PtUY3daGOyg,kz1Dyfh0REuApomw04rVmR,,,N,0,0,,,2007-02-01 02:41,2007-02-04 01:00,hbe4678,hbe4678,2007-02-05 08:00,2007-03-28 17:00,360
673,12456854,14517,6815920,13329,1,0,N,N,N,CP_Units,TT_Task,DT_FixedDUR2,RV_OK,TK_Active,CO02JU4120,02J U/G Piping Installation,,1688.01666666667,0,232,0,0,0,272,0,0,0,,2006-12-20 00:00,,2007-10-22 08:01,2007-11-25 08:01,2007-02-28 17:00,2007-01-27 08:00,2007-02-28 17:00,2007-01-27 08:00,2007-02-28 17:00,2007-01-06 08:00,2007-02-13 17:00,,2007-10-22 08:01,2007-11-25 08:01,,PT_Normal,,,,,14/ttULOTKSgSMrEz8gsgQ,2YrYV/FSS0SBW+ateVJijB,,,N,0,0,,,2007-02-01 02:41,2007-02-04 01:00,hbe4678,hbe4678,2007-01-27 08:00,2007-02-28 17:00,232
674,12456855,14517,6815920,13329,1,0,N,N,N,CP_Units,TT_Task,DT_FixedDUR2,RV_OK,TK_Active,CO02KU4120,02K U/G Piping Installation,,1712.01666666667,0,232,0,0,0,256,0,0,0,,2006-12-20 00:00,,2007-10-25 08:01,2007-11-28 08:01,2007-02-28 17:00,2007-01-27 08:00,2007-02-28 17:00,2007-01-27 08:00,2007-02-28 17:00,2007-02-25 08:00,2007-04-02 17:00,,2007-10-25 08:01,2007-11-28 08:01,,PT_Normal,,,,,thhcN5/dRj+7+SLO8ptjtA,v3o/x9jiG06Uo/6gLXC2ah,,,N,0,0,,,2007-02-01 02:41,2007-02-04 01:00,hbe4678,hbe4678,2007-01-27 08:00,2007-02-28 17:00,232
675,12456856,14517,6815920,13329,1,0,N,N,N,CP_Units,TT_Task,DT_FixedDUR2,RV_OK,TK_Active,CO02MU4120,02M U/G Piping Installation,,1912.01666666667,0,232,0,0,0,184,0,0,0,,2006-12-20 00:00,,2007-11-24 08:01,2008-01-02 08:01,2007-02-28 17:00,2007-01-27 08:00,2007-02-28 17:00,2007-01-27 08:00,2007-02-28 17:00,2007-01-06 08:00,2007-01-31 17:00,,2007-11-24 08:01,2008-01-02 08:01,,PT_Normal,,,,,90WuRIq+TJyqoOCtyZiBgQ,bPabOsb7vU2VDFHSt4TX1B,,,N,0,0,,,2007-02-01 02:41,2007-02-04 01:00,hbe4678,hbe4678,2007-01-27 08:00,2007-02-28 17:00,232
676,12456857,14517,6815920,13329,1,0,N,N,N,CP_Units,TT_Task,DT_FixedDUR2,RV_OK,TK_Active,CO02HU4120,02H U/G Piping Installation,,1296.01666666667,0,232,0,0,0,432,0,0,0,,2006-12-20 00:00,,2007-08-04 08:01,2007-09-06 08:01,2007-02-28 17:00,2007-01-27 08:00,2007-02-28 17:00,2007-01-27 08:00,2007-02-28 17:00,2007-02-25 08:00,2007-04-28 17:00,,2007-08-04 08:01,2007-09-06 08:01,,PT_Normal,,,,,vIq+iYTfSDu582+/oWXv7Q,TJ6qHYXA0EuUw6/XUZ3kHh,,,N,0,0,,,2007-02-01 02:41,2007-02-04 01:00,hbe4678,hbe4678,2007-01-27 08:00,2007-02-28 17:00,232
677,12456858,14517,6815920,13329,1,0,N,N,N,CP_Units,TT_Task,DT_FixedDUR2,RV_OK,TK_Active,CO02CU4120,02C U/G Piping Installation,,1296.01666666667,0,232,0,0,0,416,0,0,0,,2006-12-20 00:00,,2007-08-04 08:01,2007-09-06 08:01,2007-02-28 17:00,2007-01-27 08:00,2007-02-28 17:00,2007-01-27 08:00,2007-02-28 17:00,2007-01-06 08:00,2007-03-06 17:00,,2007-08-04 08:01,2007-09-06 08:01,,PT_Normal,,,,,8ZkkL9pnQTiCA63NHyydhA,71CWaDc+iEm4F6S19wTJ2h,,,N,0,0,,,2007-02-01 02:41,2007-02-04 01:00,hbe4678,hbe4678,2007-01-27 08:00,2007-02-28 17:00,232
678,12456859,14517,6815920,13329,1,0,N,N,N,CP_Units,TT_Task,DT_FixedDUR2,RV_OK,TK_Active,CO02UP0150,02U LB Pipe Erection (Firewater Piping),,1696.01666666667,0,152,0,0,0,1152,0,0,0,,2006-09-22 00:00,,2007-11-12 08:01,2007-12-04 08:01,2007-02-10 17:00,2007-02-15 08:00,2007-03-08 17:00,2007-02-15 08:00,2007-03-08 17:00,2006-09-25 08:00,2007-04-07 17:00,,2007-11-12 08:01,2007-12-04 08:01,,PT_Normal,2006-10-17 00:00,2006-11-30 00:00,,,o9U2/9whQyG7I8V6Jqhg/g,SNTQH84CAUusnDtLMGucVx,,,N,0,0,,,2007-02-01 02:41,2007-02-04 01:00,hbe4678,hbe4678,2007-02-15 08:00,2007-03-08 17:00,152
679,12456860,14517,6815920,13329,1,0,N,N,N,CP_Units,TT_Task,DT_FixedDUR2,RV_OK,TK_Active,CO02UP0130,02U LB Pipe Erection (CW & Misc Headers),,568,0,232,0,0,0,288,0,0,0,,2006-11-30 00:00,,2007-04-19 08:00,2007-05-22 17:00,2007-02-28 17:00,2007-01-27 08:00,2007-02-28 17:00,2007-01-27 08:00,2007-02-28 17:00,2006-12-02 08:00,2007-01-18 17:00,,2007-04-19 08:00,2007-05-22 17:00,,PT_Normal,,,,,6p71aWumSOiRhfF7utoLiA,fvEKxRmWsEON8AtlWgLI2h,,,N,0,0,,,2007-02-01 02:41,2007-02-01 02:43,hbe4678,hbe4678,2007-01-27 08:00,2007-02-28 17:00,232
680,12456861,14517,6815921,13329,1,0,N,N,N,CP_Units,TT_Task,DT_FixedDUR2,RV_OK,TK_Active,CO02CV1110,02C Paint Fabricated Pipe Spools,,1960.01666666667,1296,272,0,0,0,272,0,0,0,,2006-10-11 00:00,,2007-12-30 08:01,2008-02-07 08:01,,2007-02-19 08:00,2007-03-29 17:00,2007-02-19 08:00,2007-03-29 17:00,2006-10-28 08:00,2006-12-05 17:00,,2007-12-30 08:01,2008-02-07 08:01,,PT_Normal,,,,,/tlCCXyESF6khY3rEYZAqg,myosK10mkk+d113Ann/vex,,,N,0,0,,,2007-02-01 02:41,2007-02-04 01:00,hbe4678,hbe4678,2007-02-19 08:00,2007-03-29 17:00,272
681,12456862,14517,6815921,13329,1,0,N,N,N,CP_Units,TT_Task,DT_FixedDUR2,RV_OK,TK_NotStart,CO02CV1120,02C Paint Touch-up - Piping,,928.016666666667,424,272,0,0,0,272,0,0,0,,,,2008-03-03 08:01,2008-04-12 08:01,,2007-10-01 08:00,2007-11-21 17:00,2007-10-01 08:00,2007-11-21 17:00,2007-10-01 08:00,2007-11-21 17:00,,2008-03-03 08:01,2008-04-12 08:01,,PT_Normal,,,,,WxshRlt+QSqj67LsY847Wg,JqHB1OLx+kKHw7wpjxJZkx,,,N,0,0,,,2007-02-01 02:41,2007-02-04 01:00,hbe4678,hbe4678,2007-10-01 08:00,2007-11-21 17:00,272
682,12456863,14517,6815921,13329,1,0,N,N,N,CP_Units,TT_Task,DT_FixedDUR2,RV_OK,TK_NotStart,CO02CV1130,02C Paint Touch-up - Equipment,,1520.01666666667,0,272,0,0,0,272,0,0,0,,,,2008-02-18 08:01,2008-03-29 08:01,,2007-06-13 08:00,2007-07-22 17:00,2007-06-13 08:00,2007-07-22 17:00,2007-06-13 08:00,2007-07-22 17:00,,2008-02-18 08:01,2008-03-29 08:01,,PT_Normal,,,,,MauEOn4gR7OU+qDptGH1Qg,DEzjnn+JpEuNFETThOC+GB,,,N,0,0,,,2007-02-01 02:41,2007-02-04 01:00,hbe4678,hbe4678,2007-06-13 08:00,2007-07-22 17:00,272
683,12456864,14517,6815921,13329,1,100,N,N,N,CP_Units,TT_Task,DT_FixedDUR2,RV_OK,TK_Complete,CO02UV1110,02U Paint Fabricated Pipe Spools (CW & Misc Headers),,,,0,0,0,0,48,0,0,0,,2006-11-06 00:00,2006-11-30 17:00,2007-04-19 08:00,2007-04-19 08:00,,2007-01-27 08:00,2007-01-27 08:00,,,2006-11-11 08:00,2006-11-16 17:00,,,,,PT_Normal,,,,,DBne0h7NRH+OdI0jfwhBoQ,d+5HCb2LB0WHCb8k40rqwx,,,N,0,0,,,2007-02-01 02:41,2007-02-04 01:05,hbe4678,hbe4678,,,0
684,12456865,14517,6815921,13329,1,0,N,N,N,CP_Units,TT_Task,DT_FixedDUR2,RV_OK,TK_Active,CO02KV1110,02K Paint Fabricated Pipe Spools,,1448.01666666667,832.016666666667,168,0,0,0,168,0,0,0,,2006-10-25 00:00,,2008-01-05 08:01,2008-01-29 08:01,,2007-05-10 08:00,2007-06-03 17:00,2007-05-10 08:00,2007-06-03 17:00,2007-01-10 08:00,2007-02-03 17:00,,2008-01-05 08:01,2008-01-29 08:01,,PT_Normal,,,,,kGkKV7g5TLWRnM4kNiLV0w,KGEe5Pq0nEybNBMWXsSNkB,,,N,0,0,,,2007-02-01 02:41,2007-02-04 01:00,hbe4678,hbe4678,2007-05-10 08:00,2007-06-03 17:00,168
685,12456866,14517,6815921,13329,1,0,N,N,N,CP_Units,TT_Task,DT_FixedDUR2,RV_OK,TK_NotStart,CO02KV1120,02K Paint Touch-up - Piping,,832,279.983333333333,168,0,0,0,168,0,0,0,,,,2008-03-18 08:01,2008-04-12 08:01,,2007-11-12 08:01,2007-12-06 08:01,2007-11-12 08:01,2007-12-06 08:01,2007-11-12 08:01,2007-12-06 08:01,,2008-03-18 08:01,2008-04-12 08:01,,PT_Normal,,,,,SGEnYIhKQKCc4ZOe6o7fyA,ChbSXjblfEWgOO8YsyGsDx,,,N,0,0,,,2007-02-01 02:41,2007-02-04 01:00,hbe4678,hbe4678,2007-11-12 08:01,2007-12-06 08:01,168
686,12456867,14517,6815921,13329,1,0,N,N,N,CP_Units,TT_Task,DT_FixedDUR2,RV_OK,TK_NotStart,CO02KV1130,02K Paint Touch-up - Equipment,,1888.01666666667,352.016666666667,168,0,0,0,168,0,0,0,,,,2008-02-19 08:01,2008-03-15 08:01,,2007-04-22 08:00,2007-05-15 17:00,2007-04-22 08:00,2007-05-15 17:00,2007-04-22 08:00,2007-05-15 17:00,,2008-02-19 08:01,2008-03-15 08:01,,PT_Normal,,,,,uEM2zQ1WR+myWbbznxQgRw,c8TBFMDUc0u2YzxNHmqfEx,,,N,0,0,,,2007-02-01 02:41,2007-02-04 01:00,hbe4678,hbe4678,2007-04-22 08:00,2007-05-15 17:00,168
687,12456868,14517,6815921,13329,1,100,N,N,N,CP_Units,TT_Task,DT_FixedDUR2,RV_OK,TK_Active,CO02MV1110,02M Paint Fabricated Pipe Spools,,1720.01666666667,984,96,0,0,0,120,0,0,0,,2006-11-06 00:00,,2008-02-04 08:01,2008-02-18 08:01,,2007-05-01 08:00,2007-05-14 17:00,2007-05-01 08:00,2007-05-14 17:00,2006-12-02 08:00,2006-12-18 17:00,,2008-02-04 08:01,2008-02-18 08:01,,PT_Normal,,,,,jfLjYXOUQ0KfBUyv5aYtAw,+RDyLwm2EUurPrbGQ+psqx,,,N,0,0,,,2007-02-01 02:41,2007-02-04 01:00,hbe4678,hbe4678,2007-05-01 08:00,2007-05-14 17:00,96
688,12456869,14517,6815921,13329,1,0,N,N,N,CP_Units,TT_Task,DT_FixedDUR2,RV_OK,TK_NotStart,CO02MV1120,02M Paint Touch-up - Piping,,928.016666666667,400,120,0,0,0,120,0,0,0,,,,2008-03-25 08:01,2008-04-12 08:01,,2007-11-05 08:00,2007-11-21 17:00,2007-11-05 08:00,2007-11-21 17:00,2007-11-05 08:00,2007-11-21 17:00,,2008-03-25 08:01,2008-04-12 08:01,,PT_Normal,,,,,x4VKCFb4RgOCD3yD/JUopg,zGqoCarDsU+Z7xGd9n1qfh,,,N,0,0,,,2007-02-01 02:41,2007-02-04 01:00,hbe4678,hbe4678,2007-11-05 08:00,2007-11-21 17:00,120
689,12456870,14517,6815921,13329,1,0,N,N,N,CP_Units,TT_Task,DT_FixedDUR2,RV_OK,TK_NotStart,CO02MV1130,02M Paint Touch-up - Equipment,,1376.01666666667,0,120,0,0,0,120,0,0,0,,,,2008-02-26 08:01,2008-03-15 08:01,,2007-07-12 08:00,2007-07-29 17:00,2007-07-12 08:00,2007-07-29 17:00,2007-07-12 08:00,2007-07-29 17:00,,2008-02-26 08:01,2008-03-15 08:01,,PT_Normal,,,,,Qk+DzIS8S7qljMFAHT+vVQ,Gs5lfW9AB0CVSMMbdaRfwh,,,N,0,0,,,2007-02-01 02:41,2007-02-04 01:00,hbe4678,hbe4678,2007-07-12 08:00,2007-07-29 17:00,120
690,12456871,14517,6815921,13329,1,0,N,N,N,CP_Units,TT_Task,DT_FixedDUR2,RV_OK,TK_Active,CO02NV1110,02N Paint Fabricated Pipe Spools,,1728.01666666667,1280,24,0,0,0,24,0,0,0,,2006-11-18 00:00,,2008-02-05 08:01,2008-02-09 08:01,,2007-05-01 08:00,2007-05-03 17:00,2007-05-01 08:00,2007-05-03 17:00,2007-01-06 08:00,2007-01-08 17:00,,2008-02-05 08:01,2008-02-09 08:01,,PT_Normal,,,,,FhS50DpRQhKHGIGtxYca7w,G7NmuHxV6U6FoZ4XkOtRgB,,,N,0,0,,,2007-02-01 02:41,2007-02-04 01:00,hbe4678,hbe4678,2007-05-01 08:00,2007-05-03 17:00,24
691,12456872,14517,6815921,13329,1,0,N,N,N,CP_Units,TT_Task,DT_FixedDUR2,RV_OK,TK_NotStart,CO02NV1120,02N Paint Touch-up - Piping,,704.016666666667,152,48,0,0,0,48,0,0,0,,,,2008-04-05 08:01,2008-04-12 08:01,,2007-12-18 08:00,2007-12-30 17:00,2007-12-18 08:00,2007-12-30 17:00,2007-12-18 08:00,2007-12-30 17:00,,2008-04-05 08:01,2008-04-12 08:01,,PT_Normal,,,,,Qe5hQw46SHWy+rY6VSGlbw,M6484qRlt0mA3DiyH9h2Nx,,,N,0,0,,,2007-02-01 02:41,2007-02-04 01:00,hbe4678,hbe4678,2007-12-18 08:00,2007-12-30 17:00,48
692,12456873,14517,6815921,13329,1,0,N,N,N,CP_Units,TT_Task,DT_FixedDUR2,RV_OK,TK_NotStart,CO02NV1130,02N Paint Touch-up - Equipment,,1168.01666666667,0,48,0,0,0,48,0,0,0,,,,2008-03-08 08:01,2008-03-15 08:01,,2007-08-22 08:00,2007-08-28 17:00,2007-08-22 08:00,2007-08-28 17:00,2007-08-22 08:00,2007-08-28 17:00,,2008-03-08 08:01,2008-03-15 08:01,,PT_Normal,,,,,Fcc+1SHcT+u+BcyT4K0kYw,B18vbNi+m0yrWUQVstREvB,,,N,0,0,,,2007-02-01 02:41,2007-02-04 01:00,hbe4678,hbe4678,2007-08-22 08:00,2007-08-28 17:00,48
693,12456874,14517,6815921,13329,1,0,N,N,N,CP_Units,TT_Task,DT_FixedDUR2,RV_OK,TK_Active,CO02PV1110,02P Paint Fabricated Pipe Spools,,1592.01666666667,768,32,0,0,0,32,0,0,0,,2006-11-21 00:00,,2008-02-09 08:01,2008-02-13 08:01,,2007-05-24 08:00,2007-05-28 17:00,2007-05-24 08:00,2007-05-28 17:00,2007-01-06 08:00,2007-01-09 17:00,,2008-02-09 08:01,2008-02-13 08:01,,PT_Normal,,,,,Uod+r0e0T0WAa6JtcU0Ivw,EdCCDB+Z+EaDNb+VGYKMmB,,,N,0,0,,,2007-02-01 02:41,2007-02-04 01:00,hbe4678,hbe4678,2007-05-24 08:00,2007-05-28 17:00,32
694,12456875,14517,6815921,13329,1,0,N,N,N,CP_Units,TT_Task,DT_FixedDUR2,RV_OK,TK_NotStart,CO02PV1120,02P Paint Touch-up - Piping,,1000.01666666667,144,32,0,0,0,32,0,0,0,,,,2008-03-31 08:01,2008-04-05 08:01,,2007-10-31 08:00,2007-11-04 17:00,2007-10-31 08:00,2007-11-04 17:00,2007-10-31 08:00,2007-11-04 17:00,,2008-03-31 08:01,2008-04-05 08:01,,PT_Normal,,,,,H+B0MrDATge8ajwm42PzMQ,cDoPcStrRUez3uCYx9zCXh,,,N,0,0,,,2007-02-01 02:41,2007-02-04 01:00,hbe4678,hbe4678,2007-10-31 08:00,2007-11-04 17:00,32
695,12456876,14517,6815921,13329,1,0,N,N,N,CP_Units,TT_Task,DT_FixedDUR2,RV_OK,TK_NotStart,CO02PV1130,02P Paint Touch-up - Equipment,,824.016666666667,0,32,0,0,0,32,0,0,0,,,,2008-03-03 08:01,2008-03-08 08:01,,2007-10-29 08:00,2007-11-01 17:00,2007-10-29 08:00,2007-11-01 17:00,2007-10-29 08:00,2007-11-01 17:00,,2008-03-03 08:01,2008-03-08 08:01,,PT_Normal,,,,,rmm0/EjdSmacG0UYXEMe+Q,0JjNPLSAAU6sIhgYZQv0mx,,,N,0,0,,,2007-02-01 02:41,2007-02-04 01:00,hbe4678,hbe4678,2007-10-29 08:00,2007-11-01 17:00,32
696,12456877,14517,6815921,13329,1,0,N,N,N,CP_Units,TT_Task,DT_FixedDUR2,RV_OK,TK_Active,CO02QV1110,02Q Paint Fabricated Pipe Spools,,1680.01666666667,872,32,0,0,0,32,0,0,0,,2006-12-05 00:00,,2008-02-13 08:01,2008-02-18 08:01,,2007-05-16 08:00,2007-05-20 17:00,2007-05-16 08:00,2007-05-20 17:00,2007-02-12 08:01,2007-02-17 08:01,,2008-02-13 08:01,2008-02-18 08:01,,PT_Normal,,,,,i23lndwNRK+Wt/pKQ/fBhg,yvxaq8Kork2h7WqLnrugYh,,,N,0,0,,,2007-02-01 02:41,2007-02-04 01:00,hbe4678,hbe4678,2007-05-16 08:00,2007-05-20 17:00,32
697,12456878,14517,6815921,13329,1,0,N,N,N,CP_Units,TT_Task,DT_FixedDUR2,RV_OK,TK_NotStart,CO02QV1120,02Q Paint Touch-up - Piping,,968.016666666667,160,32,0,0,0,32,0,0,0,,,,2008-03-31 08:01,2008-04-05 08:01,,2007-11-05 08:00,2007-11-08 17:00,2007-11-05 08:00,2007-11-08 17:00,2007-11-05 08:00,2007-11-08 17:00,,2008-03-31 08:01,2008-04-05 08:01,,PT_Normal,,,,,OOFNnsLSRj+lC/SJAKKhPg,/Hr8OTHA6Emk6ourASmwWh,,,N,0,0,,,2007-02-01 02:41,2007-02-04 01:00,hbe4678,hbe4678,2007-11-05 08:00,2007-11-08 17:00,32
698,12456879,14517,6815921,13329,1,0,N,N,N,CP_Units,TT_Task,DT_FixedDUR2,RV_OK,TK_NotStart,CO02QV1130,02Q Paint Touch-up - Equipment,,968.016666666667,0,32,0,0,0,32,0,0,0,,,,2008-03-31 08:01,2008-04-05 08:01,,2007-11-05 08:00,2007-11-08 17:00,2007-11-05 08:00,2007-11-08 17:00,2007-11-05 08:00,2007-11-08 17:00,,2008-03-31 08:01,2008-04-05 08:01,,PT_Normal,,,,,fWIRNZt1R4+T9cCws9DJlw,oeS6xGQwRUOVUHGaKgt2Ih,,,N,0,0,,,2007-02-01 02:41,2007-02-04 01:00,hbe4678,hbe4678,2007-11-05 08:00,2007-11-08 17:00,32
699,12456880,14517,6815921,13329,1,0,N,N,N,CP_Units,TT_Task,DT_FixedDUR2,RV_OK,TK_Active,CO02YV1110,02Y Paint Fabricated Pipe Spools,,1048,0,104,0,0,0,384,0,0,0,,2006-11-18 00:00,,2007-08-07 08:00,2007-08-21 17:00,2007-01-27 17:00,2007-03-07 08:00,2007-03-21 17:00,2007-03-07 08:00,2007-03-21 17:00,2006-11-26 08:00,2007-01-27 17:00,,2007-08-07 08:00,2007-08-21 17:00,,PT_Normal,,,,,2Kx/MEvnT3OKy3n7ckPGUw,4TtGg2hgwESoQy/O9BICqh,,,N,0,0,,,2007-02-01 02:41,2007-02-01 02:43,hbe4678,hbe4678,2007-03-07 08:00,2007-03-21 17:00,104
700,12456881,14517,6815921,13329,1,0,N,N,N,CP_Units,TT_Task,DT_FixedDUR2,RV_OK,TK_NotStart,CO02YV1120,02Y Paint Touch-up - Piping,,808.016666666667,0,576,0,0,0,576,0,0,0,,,,2008-01-19 08:01,2008-04-12 08:01,,2007-08-26 08:00,2007-12-09 17:00,2007-08-26 08:00,2007-12-09 17:00,2007-08-26 08:00,2007-12-09 17:00,,2008-01-19 08:01,2008-04-12 08:01,,PT_Normal,,,,,dVqinyP1T+O+RbxGsfUygw,ONJX9sOA8EmhDLjb0pbNhx,,,N,0,0,,,2007-02-01 02:41,2007-02-04 01:00,hbe4678,hbe4678,2007-08-26 08:00,2007-12-09 17:00,576
701,12456882,14517,6815921,13329,1,0,N,N,N,CP_Units,TT_Task,DT_FixedDUR2,RV_OK,TK_NotStart,CO02YV1130,02Y Paint Touch-up - Pipe Rack,,808.016666666667,336,576,0,0,0,576,0,0,0,,,,2008-01-19 08:01,2008-04-12 08:01,,2007-08-26 08:00,2007-12-09 17:00,2007-08-26 08:00,2007-12-09 17:00,2007-08-26 08:00,2007-12-09 17:00,,2008-01-19 08:01,2008-04-12 08:01,,PT_Normal,,,,,0pEzZ0PQTtisjoxm7n9Ltg,+YXLQK7cQkW5v7QgTYOIiR,,,N,0,0,,,2007-02-01 02:41,2007-02-04 01:00,hbe4678,hbe4678,2007-08-26 08:00,2007-12-09 17:00,576
702,12456883,14517,6815921,13329,1,0,N,N,N,CP_Units,TT_Task,DT_FixedDUR2,RV_OK,TK_Active,CO02HV1110,02H Paint Fabricated Pipe Spools,,432,351.983333333333,280,0,0,0,280,0,0,0,,2006-10-11 00:00,,2007-07-28 08:01,2007-09-06 08:01,,2007-05-26 08:01,2007-07-05 08:01,2007-05-26 08:01,2007-07-05 08:01,2006-12-11 08:00,2007-01-27 17:00,,2007-07-28 08:01,2007-09-06 08:01,,PT_Normal,,,,,txLYVeeXS7OzyIgGipulkQ,jeiPKSdaoke4TkBpQThEFh,,,N,0,0,,,2007-02-01 02:41,2007-02-04 01:00,hbe4678,hbe4678,2007-05-26 08:01,2007-07-05 08:01,280
703,12456884,14517,6815921,13329,1,0,N,N,N,CP_Units,TT_Task,DT_FixedDUR2,RV_OK,TK_NotStart,CO02HV1120,02H Paint Touch-up - Piping,,360.016666666667,240,280,0,0,0,280,0,0,0,,,,2008-03-02 08:01,2008-04-12 08:01,,2008-01-09 08:00,2008-02-18 17:00,2008-01-09 08:00,2008-02-18 17:00,2008-01-09 08:00,2008-02-18 17:00,,2008-03-02 08:01,2008-04-12 08:01,,PT_Normal,,,,,v4ORC9icSnC1/UpeXsV2Wg,MCC6TTwFoUG/1ZAJZ86lVB,,,N,0,0,,,2007-02-01 02:41,2007-02-04 01:00,hbe4678,hbe4678,2008-01-09 08:00,2008-02-18 17:00,280
704,12456885,14517,6815921,13329,1,0,N,N,N,CP_Units,TT_Task,DT_FixedDUR2,RV_OK,TK_NotStart,CO02HV1130,02H Paint Touch-up - Equipment,,416.016666666667,0,280,0,0,0,280,0,0,0,,,,2007-12-18 08:01,2008-02-03 08:01,,2007-10-10 08:00,2007-11-27 17:00,2007-10-10 08:00,2007-11-27 17:00,2007-10-10 08:00,2007-11-27 17:00,,2007-12-18 08:01,2008-02-03 08:01,,PT_Normal,,,,,OWxctstaRdaaTZTnEeC37A,NC8KgE4pf0SdgHJEWh4Cdh,,,N,0,0,,,2007-02-01 02:41,2007-02-04 01:00,hbe4678,hbe4678,2007-10-10 08:00,2007-11-27 17:00,280
705,12456886,14517,6815921,13329,1,0,N,N,N,CP_Units,TT_Task,DT_FixedDUR2,RV_OK,TK_Active,CO02LV1110,02L Paint Fabricated Pipe Spools,,1296.01666666667,1416,352,0,0,0,352,0,0,0,,2006-10-11 00:00,,2007-12-06 08:01,2008-02-02 08:01,,2007-05-09 08:00,2007-06-28 17:00,2007-05-09 08:00,2007-06-28 17:00,2006-11-27 08:00,2007-01-23 17:00,,2007-12-06 08:01,2008-02-02 08:01,,PT_Normal,,,,,V9dfbsx2RgaN7uLIrTmtEQ,,,,N,0,0,,,2007-02-01 02:41,2007-02-04 01:00,hbe4678,hbe4678,2007-05-09 08:00,2007-06-28 17:00,352
706,12456887,14517,6815921,13329,1,0,N,N,N,CP_Units,TT_Task,DT_FixedDUR2,RV_OK,TK_NotStart,CO02LV1120,02L Paint Touch-up - Piping,,184.016666666667,48,352,0,0,0,352,0,0,0,,,,2008-02-20 08:01,2008-04-12 08:01,,2008-01-24 08:00,2008-03-15 17:00,2008-01-24 08:00,2008-03-15 17:00,2008-01-24 08:00,2008-03-15 17:00,,2008-02-20 08:01,2008-04-12 08:01,,PT_Normal,,,,,gZLN5J45Q/K/0pP0wx18Dw,,,,N,0,0,,,2007-02-01 02:41,2007-02-04 01:00,hbe4678,hbe4678,2008-01-24 08:00,2008-03-15 17:00,352
707,12456888,14517,6815921,13329,1,0,N,N,N,CP_Units,TT_Task,DT_FixedDUR2,RV_OK,TK_NotStart,CO02LV1130,02L Paint Touch-up - Equipment,,552.016666666667,0,352,0,0,0,352,0,0,0,,,,2007-11-27 08:01,2008-01-23 08:01,,2007-08-16 08:00,2007-10-28 17:00,2007-08-16 08:00,2007-10-28 17:00,2007-08-16 08:00,2007-10-28 17:00,,2007-11-27 08:01,2008-01-23 08:01,,PT_Normal,,,,,efyKY3JiS1mLZcxGijepsQ,,,,N,0,0,,,2007-02-01 02:41,2007-02-04 01:00,hbe4678,hbe4678,2007-08-16 08:00,2007-10-28 17:00,352
708,12456889,14517,6815921,13329,1,100,N,N,N,CP_Units,TT_Task,DT_FixedDUR2,RV_OK,TK_Active,CO02BV1110,02B Paint Fabricated Pipe Spools,,1400.01666666667,440,48,0,0,0,96,0,0,0,,2006-11-05 00:00,,2008-02-11 08:01,2008-02-18 08:01,,2007-06-24 08:00,2007-06-30 17:00,2007-06-24 08:00,2007-06-30 17:00,2006-11-11 08:00,2006-11-23 17:00,,2008-02-11 08:01,2008-02-18 08:01,,PT_Normal,,,,,iJ3KnbC4RpiYYzDQlWoNDg,s1Emt5+1bkeM5n1iQmqBHx,,,N,0,0,,,2007-02-01 02:41,2007-02-04 01:00,hbe4678,hbe4678,2007-06-24 08:00,2007-06-30 17:00,48
709,12456890,14517,6815921,13329,1,0,N,N,N,CP_Units,TT_Task,DT_FixedDUR2,RV_OK,TK_NotStart,CO02BV1120,02B Paint Touch-up - Piping,,1152.01666666667,552,48,0,0,0,48,0,0,0,,,,2008-04-05 08:01,2008-04-12 08:01,,2007-10-01 08:00,2007-10-20 17:00,2007-10-01 08:00,2007-10-20 17:00,2007-10-01 08:00,2007-10-20 17:00,,2008-04-05 08:01,2008-04-12 08:01,,PT_Normal,,,,,/sdfjdKNRVC2xoH8z1rB8A,UiQQt+zLoUq8myuJsdKhOh,,,N,0,0,,,2007-02-01 02:41,2007-02-04 01:00,hbe4678,hbe4678,2007-10-01 08:00,2007-10-20 17:00,48
710,12456891,14517,6815921,13329,1,0,N,N,N,CP_Units,TT_Task,DT_FixedDUR2,RV_OK,TK_NotStart,CO02BV1130,02B Paint Touch-up - Equipment,,2400,767.983333333333,48,0,0,0,48,0,0,0,,,,2008-03-08 08:01,2008-03-15 08:01,,2007-02-24 08:01,2007-03-03 08:01,2007-02-24 08:01,2007-03-03 08:01,2007-02-24 08:01,2007-03-03 08:01,,2008-03-08 08:01,2008-03-15 08:01,,PT_Normal,,,,,UKPvRAwHSDCC0AabMBhZpw,Bk0180oAVECxU+RnyjK4zR,,,N,0,0,,,2007-02-01 02:41,2007-02-04 01:00,hbe4678,hbe4678,2007-02-24 08:01,2007-03-03 08:01,48
711,12456892,14517,6815921,13329,1,0,N,N,N,CP_Units,TT_Task,DT_FixedDUR2,RV_OK,TK_Active,CO02DV1110,02D Paint Fabricated Pipe Spools,,1416.01666666667,920,104,0,0,0,104,0,0,0,,2006-10-11 00:00,,2008-01-13 08:01,2008-01-28 08:01,,2007-05-23 08:00,2007-06-06 17:00,2007-05-23 08:00,2007-06-06 17:00,2006-10-28 08:00,2006-11-11 17:00,,2008-01-13 08:01,2008-01-28 08:01,,PT_Normal,,,,,1UaNSLt2SzK6XAbFtVAUbw,idRGSCkHZkOY//DAyCTIwh,,,N,0,0,,,2007-02-01 02:41,2007-02-04 01:00,hbe4678,hbe4678,2007-05-23 08:00,2007-06-06 17:00,104
712,12456893,14517,6815921,13329,1,0,N,N,N,CP_Units,TT_Task,DT_FixedDUR2,RV_OK,TK_NotStart,CO02DV1120,02D Paint Touch-up - Piping,,688.016666666667,120,104,0,0,0,104,0,0,0,,,,2008-03-27 08:01,2008-04-12 08:01,,2007-12-12 08:00,2008-01-01 17:00,2007-12-12 08:00,2008-01-01 17:00,2007-12-12 08:00,2008-01-01 17:00,,2008-03-27 08:01,2008-04-12 08:01,,PT_Normal,,,,,ydC9FC+kROS5W2reBCJ++A,qGxKIAPR2U2yUCDxdJXWvR,,,N,0,0,,,2007-02-01 02:41,2007-02-04 01:00,hbe4678,hbe4678,2007-12-12 08:00,2008-01-01 17:00,104
713,12456894,14517,6815921,13329,1,0,N,N,N,CP_Units,TT_Task,DT_FixedDUR2,RV_OK,TK_NotStart,CO02DV1130,02D Paint Touch-up - Equipment,,1792.01666666667,296,104,0,0,0,104,0,0,0,,,,2008-02-28 08:01,2008-03-15 08:01,,2007-05-15 08:00,2007-05-29 17:00,2007-05-15 08:00,2007-05-29 17:00,2007-05-15 08:00,2007-05-29 17:00,,2008-02-28 08:01,2008-03-15 08:01,,PT_Normal,,,,,9/Hr9KS4QAmjRREnORVQnQ,jCfwSj8UN0yH6azV0Upa2B,,,N,0,0,,,2007-02-01 02:41,2007-02-04 01:00,hbe4678,hbe4678,2007-05-15 08:00,2007-05-29 17:00,104
714,12456895,14517,6815921,13329,1,0,N,N,N,CP_Units,TT_Task,DT_FixedDUR2,RV_OK,TK_Active,CO02EV1110,02E Paint Fabricated Pipe Spools,,2000.01666666667,1464,144,0,0,0,144,0,0,0,,2006-10-11 00:00,,2008-01-28 08:01,2008-02-18 08:01,,2007-03-14 08:00,2007-04-03 17:00,2007-03-14 08:00,2007-04-03 17:00,2007-01-14 08:00,2007-02-03 17:00,,2008-01-28 08:01,2008-02-18 08:01,,PT_Normal,,,,,Wv92AoVBQCOUc9MWScxRJw,gVDy+YKRXk266H3oClAk2x,,,N,0,0,,,2007-02-01 02:41,2007-02-04 01:00,hbe4678,hbe4678,2007-03-14 08:00,2007-04-03 17:00,144
715,12456896,14517,6815921,13329,1,0,N,N,N,CP_Units,TT_Task,DT_FixedDUR2,RV_OK,TK_NotStart,CO02EV1120,02E Paint Touch-up - Piping,,728.016666666667,208,144,0,0,0,144,0,0,0,,,,2008-03-22 08:01,2008-04-12 08:01,,2007-12-01 08:00,2007-12-26 17:00,2007-12-01 08:00,2007-12-26 17:00,2007-12-01 08:00,2007-12-26 17:00,,2008-03-22 08:01,2008-04-12 08:01,,PT_Normal,,,,,xtgLeekgSQ6WsrhrnZUPPw,A4+8HkNWCUuYbZILDX+HzR,,,N,0,0,,,2007-02-01 02:41,2007-02-04 01:00,hbe4678,hbe4678,2007-12-01 08:00,2007-12-26 17:00,144
716,12456897,14517,6815921,13329,1,0,N,N,N,CP_Units,TT_Task,DT_FixedDUR2,RV_OK,TK_NotStart,CO02EV1130,02E Paint Touch-up - Equipment,,1208.01666666667,0,144,0,0,0,144,0,0,0,,,,2008-02-23 08:01,2008-03-15 08:01,,2007-08-02 08:00,2007-08-22 17:00,2007-08-02 08:00,2007-08-22 17:00,2007-08-02 08:00,2007-08-22 17:00,,2008-02-23 08:01,2008-03-15 08:01,,PT_Normal,,,,,VHi3KoAQRAmBiljiQ1mx4w,lJxagi253UaOStLByuzzDR,,,N,0,0,,,2007-02-01 02:41,2007-02-04 01:00,hbe4678,hbe4678,2007-08-02 08:00,2007-08-22 17:00,144
717,12456898,14517,6815921,13329,1,0,N,N,N,CP_Units,TT_Task,DT_FixedDUR2,RV_OK,TK_Active,CO02FV1110,02F Paint Fabricated Pipe Spools,,1632.01666666667,816,128,0,0,0,128,0,0,0,,2006-11-12 00:00,,2008-01-30 08:01,2008-02-18 08:01,,2007-05-09 08:00,2007-05-27 17:00,2007-05-09 08:00,2007-05-27 17:00,2007-01-16 08:00,2007-02-03 17:00,,2008-01-30 08:01,2008-02-18 08:01,,PT_Normal,,,,,b0szyRSjQYOAtdScu/xYeg,HpAXKp4XQUaLRT+f1TPWZh,,,N,0,0,,,2007-02-01 02:41,2007-02-04 01:00,hbe4678,hbe4678,2007-05-09 08:00,2007-05-27 17:00,128
718,12456899,14517,6815921,13329,1,0,N,N,N,CP_Units,TT_Task,DT_FixedDUR2,RV_OK,TK_NotStart,CO02FV1120,02F Paint Touch-up - Piping,,1008.01666666667,528,128,0,0,0,128,0,0,0,,,,2008-03-24 08:01,2008-04-12 08:01,,2007-10-23 08:00,2007-11-10 17:00,2007-10-23 08:00,2007-11-10 17:00,2007-10-23 08:00,2007-11-10 17:00,,2008-03-24 08:01,2008-04-12 08:01,,PT_Normal,,,,,k+n4w21vQ3Oo1fvXi+q/cQ,TocLQ1a2QUmv/PqYdjTQjx,,,N,0,0,,,2007-02-01 02:41,2007-02-04 01:00,hbe4678,hbe4678,2007-10-23 08:00,2007-11-10 17:00,128
719,12456900,14517,6815921,13329,1,0,N,N,N,CP_Units,TT_Task,DT_FixedDUR2,RV_OK,TK_NotStart,CO02FV1130,02F Paint Touch-up - Equipment,,1600.01666666667,0,128,0,0,0,128,0,0,0,,,,2008-02-25 08:01,2008-03-15 08:01,,2007-06-09 08:00,2007-06-26 17:00,2007-06-09 08:00,2007-06-26 17:00,2007-06-09 08:00,2007-06-26 17:00,,2008-02-25 08:01,2008-03-15 08:01,,PT_Normal,,,,,jawtcbuFSZu6EG0UE6iI1g,349hJJAS9kGqokIA7h1jpB,,,N,0,0,,,2007-02-01 02:41,2007-02-04 01:00,hbe4678,hbe4678,2007-06-09 08:00,2007-06-26 17:00,128
720,12456901,14517,6815921,13329,1,0,N,N,N,CP_Units,TT_Task,DT_FixedDUR2,RV_OK,TK_Active,CO02GV1110,02G Paint Fabricated Pipe Spools,,1840.01666666667,1000.01666666667,240,0,0,0,240,0,0,0,,2006-11-12 00:00,,2008-01-08 08:01,2008-02-12 08:01,,2007-03-18 08:00,2007-04-21 17:00,2007-03-18 08:00,2007-04-21 17:00,2007-01-06 08:00,2007-02-08 17:00,,2008-01-08 08:01,2008-02-12 08:01,,PT_Normal,,,,,TJBOIwTsRQqFVmYOXPBn1g,2ASJ2vCMs0av7Ntu/A45yh,,,N,0,0,,,2007-02-01 02:41,2007-02-04 01:05,hbe4678,hbe4678,2007-03-18 08:00,2007-04-21 17:00,240
721,12456902,14517,6815921,13329,1,0,N,N,N,CP_Units,TT_Task,DT_FixedDUR2,RV_OK,TK_NotStart,CO02GV1120,02G Paint Touch-up - Piping,,1072,479.983333333333,240,0,0,0,240,0,0,0,,,,2008-03-08 08:01,2008-04-12 08:01,,2007-09-05 08:01,2007-11-01 08:01,2007-09-05 08:01,2007-11-01 08:01,2007-09-05 08:01,2007-11-01 08:01,,2008-03-08 08:01,2008-04-12 08:01,,PT_Normal,,,,,1YrSLc0RQu6SOAMcHnAs5A,c2OCkyQzUECfyaNQRDoLZh,,,N,0,0,,,2007-02-01 02:41,2007-02-04 01:05,hbe4678,hbe4678,2007-09-05 08:01,2007-11-01 08:01,240
722,12456903,14517,6815921,13329,1,0,N,N,N,CP_Units,TT_Task,DT_FixedDUR2,RV_OK,TK_NotStart,CO02GV1130,02G Paint Touch-up - Equipment,,928,0,240,0,0,0,240,0,0,0,,,,2008-02-09 08:01,2008-03-15 08:01,,2007-08-29 08:01,2007-10-25 08:01,2007-08-29 08:01,2007-10-25 08:01,2007-08-29 08:01,2007-10-25 08:01,,2008-02-09 08:01,2008-03-15 08:01,,PT_Normal,,,,,segYOYtaT9asFjmhuBq6JA,a0uZG6mVlEy8dDhh4NXYqB,,,N,0,0,,,2007-02-01 02:41,2007-02-01 02:43,hbe4678,hbe4678,2007-08-29 08:01,2007-10-25 08:01,240
723,12456904,14517,6815921,13329,1,100,N,N,N,CP_Units,TT_Task,DT_FixedDUR2,RV_OK,TK_Active,CO02JV1110,02J Paint Fabricated Pipe Spools,,1312,527.983333333333,0,0,0,0,176,0,0,0,,2006-11-06 00:00,,2007-11-26 08:01,2007-11-26 08:01,,2007-04-26 08:01,2007-04-26 08:01,2007-04-26 08:01,2007-04-26 08:01,2006-12-06 08:00,2007-01-07 17:00,,2007-11-26 08:01,2007-11-26 08:01,,PT_Normal,,,,,fFQTV+zPRbad/vtF4o4cgw,0hlKWKT6V0umCirc9oEqJB,,,N,0,0,,,2007-02-01 02:41,2007-02-04 01:00,hbe4678,hbe4678,2007-04-26 08:01,2007-04-26 08:01,0
724,12456905,14517,6815921,13329,1,0,N,N,N,CP_Units,TT_Task,DT_FixedDUR2,RV_OK,TK_NotStart,CO02JV1120,02J Paint Touch-up - Piping,,816.016666666667,0,176,0,0,0,176,0,0,0,,,,2008-02-18 08:01,2008-03-15 08:01,,2007-10-06 08:00,2007-11-10 17:00,2007-10-06 08:00,2007-11-10 17:00,2007-10-06 08:00,2007-11-10 17:00,,2008-02-18 08:01,2008-03-15 08:01,,PT_Normal,,,,,QV9bYCGqRL6L1zyJortRMg,2oj2DFr2h06NaAXVjKIWlx,,,N,0,0,,,2007-02-01 02:41,2007-02-04 01:00,hbe4678,hbe4678,2007-10-06 08:00,2007-11-10 17:00,176
725,12456906,14517,6815921,13329,1,0,N,N,N,CP_Units,TT_Task,DT_FixedDUR2,RV_OK,TK_NotStart,CO02JV1130,02J Paint Touch-up - Equipment,,816.016666666667,0,176,0,0,0,176,0,0,0,,,,2008-02-18 08:01,2008-03-15 08:01,,2007-10-06 08:00,2007-11-10 17:00,2007-10-06 08:00,2007-11-10 17:00,2007-10-06 08:00,2007-11-10 17:00,,2008-02-18 08:01,2008-03-15 08:01,,PT_Normal,,,,,0zmZT+J5SsiWEyBCpo4bPA,kg0XroYgvkSFR0Wi8TVVjB,,,N,0,0,,,2007-02-01 02:41,2007-02-04 01:00,hbe4678,hbe4678,2007-10-06 08:00,2007-11-10 17:00,176
726,12456907,14517,6815921,13329,1,100,N,N,N,CP_Units,TT_Task,DT_FixedDUR2,RV_OK,TK_Active,CO02AV1110,02A Paint Fabricated Pipe Spools,,1376.01666666667,752,96,0,0,0,152,0,0,0,,2006-10-11 00:00,,2008-02-03 08:01,2008-02-17 08:01,,2007-06-19 08:00,2007-07-02 17:00,2007-06-19 08:00,2007-07-02 17:00,2006-10-28 08:00,2006-11-18 17:00,,2008-02-03 08:01,2008-02-17 08:01,,PT_Normal,,,,,ngP0k/6lRlOFyC2WkEDRNA,myosK10mkk+d113Ann/vex,,,N,0,0,,,2007-02-01 02:41,2007-02-04 01:00,hbe4678,hbe4678,2007-06-19 08:00,2007-07-02 17:00,96
727,12456908,14517,6815921,13329,1,0,N,N,N,CP_Units,TT_Task,DT_FixedDUR2,RV_OK,TK_NotStart,CO02AV1120,02A Paint Touch-up - Piping,,824.016666666667,256,152,0,0,0,152,0,0,0,,,,2008-03-20 08:01,2008-04-12 08:01,,2007-11-15 08:00,2007-12-06 17:00,2007-11-15 08:00,2007-12-06 17:00,2007-11-15 08:00,2007-12-06 17:00,,2008-03-20 08:01,2008-04-12 08:01,,PT_Normal,,,,,+vz8JLeES/aOowsbUZNGrA,JqHB1OLx+kKHw7wpjxJZkx,,,N,0,0,,,2007-02-01 02:41,2007-02-04 01:00,hbe4678,hbe4678,2007-11-15 08:00,2007-12-06 17:00,152
728,12456909,14517,6815921,13329,1,0,N,N,N,CP_Units,TT_Task,DT_FixedDUR2,RV_OK,TK_NotStart,CO02AV1130,02A Paint Touch-up - Equipment,,1856.01666666667,408,152,0,0,0,152,0,0,0,,,,2008-02-21 08:01,2008-03-15 08:01,,2007-04-29 08:00,2007-05-20 17:00,2007-04-29 08:00,2007-05-20 17:00,2007-04-29 08:00,2007-05-20 17:00,,2008-02-21 08:01,2008-03-15 08:01,,PT_Normal,,,,,kNAR8S/NQaif1s3iO3hCpQ,DEzjnn+JpEuNFETThOC+GB,,,N,0,0,,,2007-02-01 02:41,2007-02-04 01:00,hbe4678,hbe4678,2007-04-29 08:00,2007-05-20 17:00,152
729,12456910,14517,6815921,13329,1,0,N,N,N,CP_Units,TT_WBS,DT_FixedDUR2,RV_OK,TK_Active,WO020V1100,020 Paint,1340,184.016666666667,2712,2488,22008.9,164239.79,186248.69,3224,0,0,0,,2006-10-11 00:00,,2007-07-28 08:01,2008-04-12 08:01,,2007-02-19 08:00,2008-03-15 17:00,2007-02-19 08:00,2008-03-15 17:00,2006-10-28 08:00,2008-03-15 17:00,,2007-07-28 08:01,2008-04-12 08:01,,PT_Normal,,,,,1ZirAHL7SeKVTmgZW8F4xA,bPl1JnxunkKyBantdmRXEB,,,N,0,0,,,2007-02-01 02:41,2007-02-04 01:05,hbe4678,hbe4678,2007-02-19 08:00,2008-03-15 17:00,2488
730,12456911,14517,6815922,13329,1,0,N,N,N,CP_Units,TT_Task,DT_FixedDUR2,RV_OK,TK_NotStart,CO02JV2120,02J Insulate - Piping,,816.016666666667,480,232,0,0,0,232,0,0,0,,,,2008-03-09 08:01,2008-04-12 08:01,,2007-11-05 08:00,2007-12-08 17:00,2007-11-05 08:00,2007-12-08 17:00,2007-11-05 08:00,2007-12-08 17:00,,2008-03-09 08:01,2008-04-12 08:01,,PT_Normal,,,,,+lY9E/ESQNqI8XSkAz3RFw,EBFiMcN3PECNWj2D1vTfnx,,,N,0,0,,,2007-02-01 02:41,2007-02-04 01:00,hbe4678,hbe4678,2007-11-05 08:00,2007-12-08 17:00,232
731,12456912,14517,6815922,13329,1,0,N,N,N,CP_Units,TT_Task,DT_FixedDUR2,RV_OK,TK_NotStart,CO02KV2110,02K Insulate - Equipment,,1536,839.983333333333,168,0,0,0,168,0,0,0,,,,2008-03-18 08:01,2008-04-12 08:01,,2007-07-10 08:01,2007-08-04 08:01,2007-07-10 08:01,2007-08-04 08:01,2007-07-10 08:01,2007-08-04 08:01,,2008-03-18 08:01,2008-04-12 08:01,,PT_Normal,,,,,mQSpDNbQRguuR7j5hC2Csw,al6qa9CXxkqB9x7Whz4Hmh,,,N,0,0,,,2007-02-01 02:41,2007-02-04 01:00,hbe4678,hbe4678,2007-07-10 08:01,2007-08-04 08:01,168
732,12456913,14517,6815922,13329,1,0,N,N,N,CP_Units,TT_Task,DT_FixedDUR2,RV_OK,TK_NotStart,CO02KV2120,02K Insulate - Piping,,640,255.983333333333,224,0,0,0,224,0,0,0,,,,2008-03-10 08:01,2008-04-12 08:01,,2007-12-02 08:01,2008-01-09 08:01,2007-12-02 08:01,2008-01-09 08:01,2007-12-02 08:01,2008-01-09 08:01,,2008-03-10 08:01,2008-04-12 08:01,,PT_Normal,,,,,GHV0fUDrTN+vBDriDAwcTw,de+uaMaVEEaokObtEe65pR,,,N,0,0,,,2007-02-01 02:41,2007-02-04 01:00,hbe4678,hbe4678,2007-12-02 08:01,2008-01-09 08:01,224
733,12456914,14517,6815922,13329,1,0,N,N,N,CP_Units,TT_Task,DT_FixedDUR2,RV_OK,TK_NotStart,CO02MV2110,02M Insulate - Equipment,,1376.01666666667,680,120,0,0,0,120,0,0,0,,,,2008-03-25 08:01,2008-04-12 08:01,,2007-08-09 08:00,2007-08-26 17:00,2007-08-09 08:00,2007-08-26 17:00,2007-08-09 08:00,2007-08-26 17:00,,2008-03-25 08:01,2008-04-12 08:01,,PT_Normal,,,,,1Ir+zr6eSCSYnyX4ptnVPQ,mhrXdYVCjkiZKb3qqDi5Qx,,,N,0,0,,,2007-02-01 02:41,2007-02-04 01:00,hbe4678,hbe4678,2007-08-09 08:00,2007-08-26 17:00,120
734,12456915,14517,6815922,13329,1,0,N,N,N,CP_Units,TT_Task,DT_FixedDUR2,RV_OK,TK_NotStart,CO02MV2120,02M Insulate - Piping,,736.016666666667,328,160,0,0,0,160,0,0,0,,,,2008-03-19 08:01,2008-04-12 08:01,,2007-11-27 08:00,2007-12-25 17:00,2007-11-27 08:00,2007-12-25 17:00,2007-11-27 08:00,2007-12-25 17:00,,2008-03-19 08:01,2008-04-12 08:01,,PT_Normal,,,,,6at/1XyxQ+m3ezS7+WDGlw,C8YbXOU9BE+f0UHTPG+Wnx,,,N,0,0,,,2007-02-01 02:41,2007-02-04 01:00,hbe4678,hbe4678,2007-11-27 08:00,2007-12-25 17:00,160
735,12456916,14517,6815922,13329,1,0,N,N,N,CP_Units,TT_Task,DT_FixedDUR2,RV_OK,TK_NotStart,CO02NV2110,02N Insulate - Equipment,,1168.01666666667,472,96,0,0,0,96,0,0,0,,,,2008-03-29 08:01,2008-04-12 08:01,,2007-09-12 08:00,2007-10-08 17:00,2007-09-12 08:00,2007-10-08 17:00,2007-09-12 08:00,2007-10-08 17:00,,2008-03-29 08:01,2008-04-12 08:01,,PT_Normal,,,,,KE1bYyaRRSWwbAEHy8AQ7w,lSJECZGMJE+nI4wHE7qeyx,,,N,0,0,,,2007-02-01 02:41,2007-02-04 01:00,hbe4678,hbe4678,2007-09-12 08:00,2007-10-08 17:00,96
736,12456917,14517,6815922,13329,1,0,N,N,N,CP_Units,TT_Task,DT_FixedDUR2,RV_OK,TK_NotStart,CO02NV2120,02N Insulate - Piping,,448.016666666667,0,96,0,0,0,96,0,0,0,,,,2008-03-29 08:01,2008-04-12 08:01,,2008-01-23 08:00,2008-02-05 17:00,2008-01-23 08:00,2008-02-05 17:00,2008-01-23 08:00,2008-02-05 17:00,,2008-03-29 08:01,2008-04-12 08:01,,PT_Normal,,,,,NNlPTr6CSO+cDyg2GHwDnw,9e7ppwEM6kObUpTzDuGWyx,,,N,0,0,,,2007-02-01 02:41,2007-02-04 01:00,hbe4678,hbe4678,2008-01-23 08:00,2008-02-05 17:00,96
737,12456918,14517,6815922,13329,1,0,N,N,N,CP_Units,TT_Task,DT_FixedDUR2,RV_OK,TK_NotStart,CO02PV2110,02P Insulate - Equipment,,824.016666666667,128,48,0,0,0,48,0,0,0,,,,2008-04-05 08:01,2008-04-12 08:01,,2007-12-01 08:00,2007-12-06 17:00,2007-12-01 08:00,2007-12-06 17:00,2007-12-01 08:00,2007-12-06 17:00,,2008-04-05 08:01,2008-04-12 08:01,,PT_Normal,,,,,UUfacvrtTUaVJAHalv4uiQ,zhhXCaCQT0uh6A0jMnR3Kx,,,N,0,0,,,2007-02-01 02:41,2007-02-04 01:00,hbe4678,hbe4678,2007-12-01 08:00,2007-12-06 17:00,48
738,12456919,14517,6815922,13329,1,0,N,N,N,CP_Units,TT_Task,DT_FixedDUR2,RV_OK,TK_NotStart,CO02PV2120,02P Insulate - Piping,,856.016666666667,344,48,0,0,0,48,0,0,0,,,,2008-04-05 08:01,2008-04-12 08:01,,2007-11-26 08:00,2007-12-02 17:00,2007-11-26 08:00,2007-12-02 17:00,2007-11-26 08:00,2007-12-02 17:00,,2008-04-05 08:01,2008-04-12 08:01,,PT_Normal,,,,,OsU0SqyXQD6xhmpWdlqPHw,zAovlt3SNEmw5ODK005Muh,,,N,0,0,,,2007-02-01 02:41,2007-02-04 01:00,hbe4678,hbe4678,2007-11-26 08:00,2007-12-02 17:00,48
739,12456920,14517,6815922,13329,1,0,N,N,N,CP_Units,TT_Task,DT_FixedDUR2,RV_OK,TK_NotStart,CO02QV2110,02Q Insulate - Equipment,,968.016666666667,272,48,0,0,0,48,0,0,0,,,,2008-04-05 08:01,2008-04-12 08:01,,2007-11-10 08:00,2007-11-15 17:00,2007-11-10 08:00,2007-11-15 17:00,2007-11-10 08:00,2007-11-15 17:00,,2008-04-05 08:01,2008-04-12 08:01,,PT_Normal,,,,,O13S0JmsTyGaZ8MRvOnTBg,SpAZc0wzHEKwaBcEQl6Qpx,,,N,0,0,,,2007-02-01 02:41,2007-02-04 01:00,hbe4678,hbe4678,2007-11-10 08:00,2007-11-15 17:00,48
740,12456921,14517,6815922,13329,1,0,N,N,N,CP_Units,TT_Task,DT_FixedDUR2,RV_OK,TK_NotStart,CO02QV2120,02Q Insulate - Piping,,808.016666666667,304,48,0,0,0,48,0,0,0,,,,2008-04-05 08:01,2008-04-12 08:01,,2007-12-03 08:00,2007-12-09 17:00,2007-12-03 08:00,2007-12-09 17:00,2007-12-03 08:00,2007-12-09 17:00,,2008-04-05 08:01,2008-04-12 08:01,,PT_Normal,,,,,gv4JEl/jS3ypFtIBAn/wlg,0/4CoawxTkWjGDlxzh7F9x,,,N,0,0,,,2007-02-01 02:41,2007-02-04 01:00,hbe4678,hbe4678,2007-12-03 08:00,2007-12-09 17:00,48
741,12456922,14517,6815922,13329,1,0,N,N,N,CP_Units,TT_Task,DT_FixedDUR2,RV_OK,TK_NotStart,CO02YV2120,02Y Insulate - Piping,,520.016666666667,96,576,0,0,0,576,0,0,0,,,,2008-01-19 08:01,2008-04-12 08:01,,2007-10-29 08:00,2008-01-26 17:00,2007-10-29 08:00,2008-01-26 17:00,2007-10-29 08:00,2008-01-26 17:00,,2008-01-19 08:01,2008-04-12 08:01,,PT_Normal,,,,,3cEDctmcS9mg/cYM+mYB4g,+vYlvubPvUWYGnLNqlGnEx,,,N,0,0,,,2007-02-01 02:41,2007-02-04 01:00,hbe4678,hbe4678,2007-10-29 08:00,2008-01-26 17:00,576
742,12456923,14517,6815922,13329,1,0,N,N,N,CP_Units,TT_Task,DT_FixedDUR2,RV_OK,TK_NotStart,CO02CV2110,02C Insulate - Equipment,,1520.01666666667,824,272,0,0,0,272,0,0,0,,,,2008-03-03 08:01,2008-04-12 08:01,,2007-06-27 08:00,2007-08-05 17:00,2007-06-27 08:00,2007-08-05 17:00,2007-06-27 08:00,2007-08-05 17:00,,2008-03-03 08:01,2008-04-12 08:01,,PT_Normal,,,,,XEe5LD8SSOy1vFjhGrfxwg,jhot3AcV6U+ljkGvIbF6wx,,,N,0,0,,,2007-02-01 02:41,2007-02-04 01:00,hbe4678,hbe4678,2007-06-27 08:00,2007-08-05 17:00,272
743,12456924,14517,6815922,13329,1,0,N,N,N,CP_Units,TT_Task,DT_FixedDUR2,RV_OK,TK_NotStart,CO02CV2120,02C Insulate - Piping,,736.016666666667,408,360,0,0,0,360,0,0,0,,,,2008-02-19 08:01,2008-04-12 08:01,,2007-10-29 08:00,2007-12-25 17:00,2007-10-29 08:00,2007-12-25 17:00,2007-10-29 08:00,2007-12-25 17:00,,2008-02-19 08:01,2008-04-12 08:01,,PT_Normal,,,,,RqELK/1ORS+RCWMg+1+45w,usf1ZLgKL06jM0MmBQnjeR,,,N,0,0,,,2007-02-01 02:41,2007-02-04 01:00,hbe4678,hbe4678,2007-10-29 08:00,2007-12-25 17:00,360
744,12456925,14517,6815922,13329,1,0,N,N,N,CP_Units,TT_Task,DT_FixedDUR2,RV_OK,TK_NotStart,CO02HV2110,02H Insulate - Equipment,,416.016666666667,0,280,0,0,0,280,0,0,0,,,,2008-01-21 08:01,2008-03-02 08:01,,2007-11-15 08:00,2007-12-31 17:00,2007-11-15 08:00,2007-12-31 17:00,2007-11-15 08:00,2007-12-31 17:00,,2008-01-21 08:01,2008-03-02 08:01,,PT_Normal,,,,,PwWW5si2T12SEGE3LqywMA,94r2bgJYckGP/3c3c4epnB,,,N,0,0,,,2007-02-01 02:41,2007-02-04 01:00,hbe4678,hbe4678,2007-11-15 08:00,2007-12-31 17:00,280
745,12456926,14517,6815922,13329,1,0,N,N,N,CP_Units,TT_Task,DT_FixedDUR2,RV_OK,TK_NotStart,CO02HV2120,02H Insulate - Piping,,168.016666666667,88,376,0,0,0,376,0,0,0,,,,2008-02-17 08:01,2008-04-12 08:01,,2008-01-23 08:00,2008-03-17 17:00,2008-01-23 08:00,2008-03-17 17:00,2008-01-23 08:00,2008-03-17 17:00,,2008-02-17 08:01,2008-04-12 08:01,,PT_Normal,,,,,0VARzcffTvCqXRdfIbF+sw,udmpAZsYqESkU4cDdm+GWR,,,N,0,0,,,2007-02-01 02:41,2007-02-04 01:00,hbe4678,hbe4678,2008-01-23 08:00,2008-03-17 17:00,376
746,12456927,14517,6815922,13329,1,0,N,N,N,CP_Units,TT_Task,DT_FixedDUR2,RV_OK,TK_NotStart,CO02AV2110,02A Insulate - Equipment,,1448.01666666667,752,152,0,0,0,152,0,0,0,,,,2008-03-20 08:01,2008-04-12 08:01,,2007-07-25 08:00,2007-08-15 17:00,2007-07-25 08:00,2007-08-15 17:00,2007-07-25 08:00,2007-08-15 17:00,,2008-03-20 08:01,2008-04-12 08:01,,PT_Normal,,,,,h6OS6zQgQNyZL9TyJh4K6w,jhot3AcV6U+ljkGvIbF6wx,,,N,0,0,,,2007-02-01 02:41,2007-02-04 01:00,hbe4678,hbe4678,2007-07-25 08:00,2007-08-15 17:00,152
747,12456928,14517,6815922,13329,1,0,N,N,N,CP_Units,TT_Task,DT_FixedDUR2,RV_OK,TK_NotStart,CO02AV2120,02A Insulate - Piping,,632.016666666667,224,208,0,0,0,208,0,0,0,,,,2008-03-12 08:01,2008-04-12 08:01,,2007-12-05 08:00,2008-01-09 17:00,2007-12-05 08:00,2008-01-09 17:00,2007-12-05 08:00,2008-01-09 17:00,,2008-03-12 08:01,2008-04-12 08:01,,PT_Normal,,,,,eGzqpkShRrqhxJPHDf1GnA,usf1ZLgKL06jM0MmBQnjeR,,,N,0,0,,,2007-02-01 02:41,2007-02-04 01:00,hbe4678,hbe4678,2007-12-05 08:00,2008-01-09 17:00,208
748,12456929,14517,6815922,13329,1,0,N,N,N,CP_Units,TT_WBS,DT_FixedDUR2,RV_OK,TK_NotStart,WO020V2100,020 Insulation,1340,-7.98333333333333,2520,1800,0,244538.43,244538.43,1800,0,0,0,,,,2007-12-31 08:01,2008-04-12 08:01,,2007-06-27 08:00,2008-04-12 17:00,2007-06-27 08:00,2008-04-12 17:00,2007-06-27 08:00,2008-04-12 17:00,,2007-12-31 08:01,2008-04-12 08:01,,PT_Normal,,,,,36hEexv0Qamfznm/U7LkgQ,/GbaB1GnSk2sOGHvBnSJHB,,,N,0,0,,,2007-02-01 02:41,2007-02-04 01:05,hbe4678,hbe4678,2007-06-27 08:00,2008-04-12 17:00,1800
749,12456930,14517,6815922,13329,1,0,N,N,N,CP_Units,TT_Task,DT_FixedDUR2,RV_OK,TK_NotStart,CO02HM0245,02H Install Insulation (101-B),,1392.01666666667,0,384,0,0,0,384,0,0,0,,,,2008-02-16 08:01,2008-04-12 08:01,,2007-06-30 08:00,2007-08-23 17:00,2007-06-30 08:00,2007-08-23 17:00,2007-06-30 08:00,2007-08-23 17:00,,2008-02-16 08:01,2008-04-12 08:01,,PT_Normal,,,,,OuKItk5FS/+c0kXX5NgmxQ,,,,N,0,0,,,2007-02-01 02:41,2007-02-04 01:00,hbe4678,hbe4678,2007-06-30 08:00,2007-08-23 17:00,384
750,12456931,14517,6815922,13329,1,0,N,N,N,CP_Units,TT_Task,DT_FixedDUR2,RV_OK,TK_NotStart,CO02LV2110,02L Insulate - Equipment,,552.016666666667,208,352,0,0,0,352,0,0,0,,,,2007-12-31 08:01,2008-02-20 08:01,,2007-09-15 08:00,2007-11-25 17:00,2007-09-15 08:00,2007-11-25 17:00,2007-09-15 08:00,2007-11-25 17:00,,2007-12-31 08:01,2008-02-20 08:01,,PT_Normal,,,,,HJl7MKGBTyG9s6ANgM7xWg,,,,N,0,0,,,2007-02-01 02:41,2007-02-04 01:00,hbe4678,hbe4678,2007-09-15 08:00,2007-11-25 17:00,352
751,12456932,14517,6815922,13329,1,0,N,N,N,CP_Units,TT_Task,DT_FixedDUR2,RV_OK,TK_NotStart,CO02LV2120,02L Insulate - Piping,,-7.98333333333333,112,472,0,0,0,472,0,0,0,,,,2008-02-03 08:01,2008-04-12 08:01,,2008-02-04 08:00,2008-04-12 17:00,2008-02-04 08:00,2008-04-12 17:00,2008-02-04 08:00,2008-04-12 17:00,,2008-02-03 08:01,2008-04-12 08:01,,PT_Normal,,,,,/OJFfx9WS7O0dUG7jogvsA,,,,N,0,0,,,2007-02-01 02:41,2007-02-04 01:00,hbe4678,hbe4678,2008-02-04 08:00,2008-04-12 17:00,472
752,12456933,14517,6815922,13329,1,0,N,N,N,CP_Units,TT_Task,DT_FixedDUR2,RV_OK,TK_NotStart,CO02BV2110,02B Insulate - Equipment,,1632.01666666667,936,48,0,0,0,48,0,0,0,,,,2008-04-05 08:01,2008-04-12 08:01,,2007-07-14 08:00,2007-07-19 17:00,2007-07-14 08:00,2007-07-19 17:00,2007-07-14 08:00,2007-07-19 17:00,,2008-04-05 08:01,2008-04-12 08:01,,PT_Normal,,,,,EA930AG4SH6J/rfbDWdf4w,FIZsEi8/0UKT5aG54ki9IR,,,N,0,0,,,2007-02-01 02:41,2007-02-04 01:00,hbe4678,hbe4678,2007-07-14 08:00,2007-07-19 17:00,48
753,12456934,14517,6815922,13329,1,0,N,N,N,CP_Units,TT_Task,DT_FixedDUR2,RV_OK,TK_NotStart,CO02BV2120,02B Insulate - Piping,,960.016666666667,384,48,0,0,0,48,0,0,0,,,,2008-04-05 08:01,2008-04-12 08:01,,2007-11-11 08:00,2007-11-17 17:00,2007-11-11 08:00,2007-11-17 17:00,2007-11-11 08:00,2007-11-17 17:00,,2008-04-05 08:01,2008-04-12 08:01,,PT_Normal,,,,,mVksq5LERnG7FfVavhSCCg,YApYyu0ERkWw1LbG67PPih,,,N,0,0,,,2007-02-01 02:41,2007-02-04 01:00,hbe4678,hbe4678,2007-11-11 08:00,2007-11-17 17:00,48
754,12456935,14517,6815922,13329,1,0,N,N,N,CP_Units,TT_Task,DT_FixedDUR2,RV_OK,TK_NotStart,CO02DV2110,02D Insulate - Equipment,,1496.01666666667,800,104,0,0,0,104,0,0,0,,,,2008-03-27 08:01,2008-04-12 08:01,,2007-07-25 08:00,2007-08-08 17:00,2007-07-25 08:00,2007-08-08 17:00,2007-07-25 08:00,2007-08-08 17:00,,2008-03-27 08:01,2008-04-12 08:01,,PT_Normal,,,,,3dOA/wHSRTmtG9xEl4t79w,nn/ZYD++Q02XMfxM5Himrh,,,N,0,0,,,2007-02-01 02:41,2007-02-04 01:00,hbe4678,hbe4678,2007-07-25 08:00,2007-08-08 17:00,104
755,12456936,14517,6815922,13329,1,0,N,N,N,CP_Units,TT_Task,DT_FixedDUR2,RV_OK,TK_NotStart,CO02DV2120,02D Insulate - Piping,,496.016666666667,32,144,0,0,0,144,0,0,0,,,,2008-03-22 08:01,2008-04-12 08:01,,2008-01-09 08:00,2008-01-29 17:00,2008-01-09 08:00,2008-01-29 17:00,2008-01-09 08:00,2008-01-29 17:00,,2008-03-22 08:01,2008-04-12 08:01,,PT_Normal,,,,,sLXjULZzTMibD4G19cNLUA,I8prminbx0yllkIbZd+rMB,,,N,0,0,,,2007-02-01 02:41,2007-02-04 01:00,hbe4678,hbe4678,2008-01-09 08:00,2008-01-29 17:00,144
756,12456937,14517,6815922,13329,1,0,N,N,N,CP_Units,TT_Task,DT_FixedDUR2,RV_OK,TK_NotStart,CO02EV2110,02E Insulate - Equipment,,1208.01666666667,512,144,0,0,0,144,0,0,0,,,,2008-03-22 08:01,2008-04-12 08:01,,2007-08-30 08:00,2007-09-26 17:00,2007-08-30 08:00,2007-09-26 17:00,2007-08-30 08:00,2007-09-26 17:00,,2008-03-22 08:01,2008-04-12 08:01,,PT_Normal,,,,,PTMFfDzORniuJnUcs6YihQ,/o8rsGLoXkOVpr8PoUzqgx,,,N,0,0,,,2007-02-01 02:41,2007-02-04 01:00,hbe4678,hbe4678,2007-08-30 08:00,2007-09-26 17:00,144
757,12456938,14517,6815922,13329,1,0,N,N,N,CP_Units,TT_Task,DT_FixedDUR2,RV_OK,TK_NotStart,CO02EV2120,02E Insulate - Piping,,536.016666666667,160,192,0,0,0,192,0,0,0,,,,2008-03-15 08:01,2008-04-12 08:01,,2007-12-27 08:00,2008-01-23 17:00,2007-12-27 08:00,2008-01-23 17:00,2007-12-27 08:00,2008-01-23 17:00,,2008-03-15 08:01,2008-04-12 08:01,,PT_Normal,,,,,vbBZEnA4T7Kxo0hCVYhOQA,o7sYOcLj9USs2g+toYj6zR,,,N,0,0,,,2007-02-01 02:41,2007-02-04 01:00,hbe4678,hbe4678,2007-12-27 08:00,2008-01-23 17:00,192
758,12456939,14517,6815922,13329,1,0,N,N,N,CP_Units,TT_Task,DT_FixedDUR2,RV_OK,TK_NotStart,CO02FV2110,02F Insulate - Equipment,,1600.01666666667,904,128,0,0,0,128,0,0,0,,,,2008-03-24 08:01,2008-04-12 08:01,,2007-07-07 08:00,2007-07-24 17:00,2007-07-07 08:00,2007-07-24 17:00,2007-07-07 08:00,2007-07-24 17:00,,2008-03-24 08:01,2008-04-12 08:01,,PT_Normal,,,,,P58ke78NSoGYgSFUNc4wJQ,WfKNc4M4E0CmJh+FXBXb2R,,,N,0,0,,,2007-02-01 02:41,2007-02-04 01:00,hbe4678,hbe4678,2007-07-07 08:00,2007-07-24 17:00,128
759,12456940,14517,6815922,13329,1,0,N,N,N,CP_Units,TT_Task,DT_FixedDUR2,RV_OK,TK_NotStart,CO02FV2120,02F Insulate - Piping,,816.016666666667,464,176,0,0,0,176,0,0,0,,,,2008-03-17 08:01,2008-04-12 08:01,,2007-11-13 08:00,2007-12-08 17:00,2007-11-13 08:00,2007-12-08 17:00,2007-11-13 08:00,2007-12-08 17:00,,2008-03-17 08:01,2008-04-12 08:01,,PT_Normal,,,,,E0XngwrHSf6s4DCHpfGJjA,NoAtHpT4o02lUE48aWteix,,,N,0,0,,,2007-02-01 02:41,2007-02-04 01:00,hbe4678,hbe4678,2007-11-13 08:00,2007-12-08 17:00,176
760,12456941,14517,6815922,13329,1,0,N,N,N,CP_Units,TT_Task,DT_FixedDUR2,RV_OK,TK_NotStart,CO02GV2110,02G Insulate - Equipment,,928,231.983333333333,240,0,0,0,240,0,0,0,,,,2008-03-08 08:01,2008-04-12 08:01,,2007-10-10 08:01,2007-11-22 08:01,2007-10-10 08:01,2007-11-22 08:01,2007-10-10 08:01,2007-11-22 08:01,,2008-03-08 08:01,2008-04-12 08:01,,PT_Normal,,,,,0kbIQ97pQw6Hr9rQxE37zg,sTMlI07F7U+SRY8sgP/mUh,,,N,0,0,,,2007-02-01 02:41,2007-02-04 01:00,hbe4678,hbe4678,2007-10-10 08:01,2007-11-22 08:01,240
761,12456942,14517,6815922,13329,1,0,N,N,N,CP_Units,TT_Task,DT_FixedDUR2,RV_OK,TK_NotStart,CO02GV2120,02G Insulate - Piping,,880,447.983333333333,312,0,0,0,312,0,0,0,,,,2008-02-26 08:01,2008-04-12 08:01,,2007-10-03 08:01,2007-11-29 08:01,2007-10-03 08:01,2007-11-29 08:01,2007-10-03 08:01,2007-11-29 08:01,,2008-02-26 08:01,2008-04-12 08:01,,PT_Normal,,,,,hXTh9KTrTaqOm8AQFIsD1g,j5IUTbXcg0WHOdZg66Po/x,,,N,0,0,,,2007-02-01 02:41,2007-02-04 01:05,hbe4678,hbe4678,2007-10-03 08:01,2007-11-29 08:01,312
762,12456943,14517,6815922,13329,1,0,N,N,N,CP_Units,TT_Task,DT_FixedDUR2,RV_OK,TK_NotStart,CO02JV2110,02J Insulate - Equipment,,816.016666666667,120,176,0,0,0,176,0,0,0,,,,2008-03-17 08:01,2008-04-12 08:01,,2007-11-13 08:00,2007-12-08 17:00,2007-11-13 08:00,2007-12-08 17:00,2007-11-13 08:00,2007-12-08 17:00,,2008-03-17 08:01,2008-04-12 08:01,,PT_Normal,,,,,5IgRKG+0SGq1X60VnHS+CQ,Q1HsdPW2AUGauC4/kjpEsR,,,N,0,0,,,2007-02-01 02:41,2007-02-04 01:00,hbe4678,hbe4678,2007-11-13 08:00,2007-12-08 17:00,176
763,12456944,14517,6815926,13329,1,100,N,N,N,CP_Units,TT_Task,DT_FixedDUR2,RV_OK,TK_Complete,CO02NC0110,"02N Form, Pour, Strip Fnds - Major Fnds",,,,0,0,0,0,240,0,0,0,,2006-07-25 08:00,2006-12-09 00:00,2007-09-19 08:01,2007-09-19 08:01,,2007-01-27 00:00,2007-01-27 00:00,,,2006-07-25 08:00,2006-08-28 17:00,,,,,PT_Normal,,,,,AZjyP96URrSyEZfzy8TBjg,RmAUYC9qmkCCLP2gQf/fUR,,,N,0,0,,,2007-02-01 02:41,2007-02-04 01:05,hbe4678,hbe4678,,,0
764,12456945,14517,6815926,13329,1,100,N,N,N,CP_Units,TT_Task,DT_FixedDUR2,RV_OK,TK_Complete,CO02YC0140,02Y Form Pour Strip Fnds -  Pipe Rack,,,,0,0,0,0,624,0,0,0,,2006-05-27 08:00,2006-12-03 00:00,2006-12-25 08:00,2006-12-25 08:00,,2007-01-27 00:00,2007-01-27 00:00,,,2006-05-27 08:00,2006-08-24 17:00,,,,,PT_Normal,,,,,EWZAcdnpSi2qV0hqzWm5rQ,p8w9j94q0EimlvJKZgWocx,,,N,0,0,,,2007-02-01 02:41,2007-02-04 01:05,hbe4678,hbe4678,,,0
765,12456946,14517,6815926,13329,1,100,N,N,N,CP_Units,TT_Task,DT_FixedDUR2,RV_OK,TK_Complete,CO02HC0110,"02H Form, Pour, Strip Fnds - 101B (Primary Reformer)",,,,0,0,0,0,624,0,0,0,,2006-07-06 00:00,2006-11-04 00:00,2007-06-07 08:01,2007-06-07 08:01,,2007-01-27 00:00,2007-01-27 00:00,,,2006-07-09 08:00,2006-10-28 17:00,,,,,PT_Normal,,,,,raUU6IopQOiyca8bW14nLg,n/npmlazIEqL43sQCra2Mx,,,N,0,0,,,2007-02-01 02:41,2007-02-04 01:05,hbe4678,hbe4678,,,0
766,12456947,14517,6815926,13329,1,0,N,N,N,CP_Units,TT_Task,DT_FixedDUR2,RV_OK,TK_NotStart,CO02HC0120,"02H Form, Pour, Strip Fnds - Misc Fnds",,1392.01666666667,312,144,0,0,0,144,0,0,0,,,,2007-09-06 08:01,2007-10-20 08:01,,2007-02-15 08:00,2007-03-07 17:00,2007-02-15 08:00,2007-03-07 17:00,2007-02-15 08:00,2007-03-07 17:00,,2007-09-06 08:01,2007-10-20 08:01,,PT_Normal,,,,,R3PQwBZUQma7DG1fDkxb5g,vw6y/DVrqU2IMbrIkViTvh,,,N,0,0,,,2007-02-01 02:41,2007-02-04 01:00,hbe4678,hbe4678,2007-02-15 08:00,2007-03-07 17:00,144
767,12456948,14517,6815926,13329,1,100,N,N,N,CP_Units,TT_Task,DT_FixedDUR2,RV_OK,TK_Complete,CO02HC0140,02H Form Pour Strip Fnds -  Structure,,,,0,0,0,0,200,0,0,0,,2006-04-20 08:00,2006-10-31 00:00,2007-09-10 08:01,2007-09-10 08:01,,2007-01-27 00:00,2007-01-27 00:00,,,2006-04-20 08:00,2006-05-18 17:00,,,,,PT_Normal,,,,,F83AqHMBSKKj4EctFq4mIw,in5ijniJtk+HyHPKvTIksB,,,N,0,0,,,2007-02-01 02:41,2007-02-04 01:05,hbe4678,hbe4678,,,0
768,12456949,14517,6815926,13329,1,100,N,N,N,CP_Units,TT_Task,DT_FixedDUR2,RV_OK,TK_Complete,CO02HC0150,"02H Form, Pour, Strip Fnd - 103-D (Secondary Reformer)",,,,0,0,0,0,240,0,0,0,,2006-05-21 08:00,2006-08-22 00:00,2007-06-07 08:01,2007-06-07 08:01,,2007-01-27 00:00,2007-01-27 00:00,,,2006-05-21 08:00,2006-06-24 17:00,,,,,PT_Normal,,,,,omx6539vRlKBtbVIW+7QPw,vjoB/awYrkyD50mPQKouNh,,,N,0,0,,,2007-02-01 02:41,2007-02-04 01:05,hbe4678,hbe4678,,,0
769,12456950,14517,6815926,13329,1,100,N,N,N,CP_Units,TT_Task,DT_FixedDUR2,RV_OK,TK_Complete,CO02HC0160,"02H Form, Pour, Strip Fnd - 156-F (Steam Blowdown Drum)",,,,0,0,0,0,96,0,0,0,,2006-07-08 00:00,2006-10-10 00:00,2007-08-23 08:01,2007-08-23 08:01,,2007-01-27 00:00,2007-01-27 00:00,,,2006-05-20 08:00,2006-06-01 17:00,,,,,PT_Normal,,,,,VpaFC1bGRdqAPOqgsk8wAQ,Jyohklr0dE6O3jPQGguGKB,,,N,0,0,,,2007-02-01 02:41,2007-02-04 01:05,hbe4678,hbe4678,,,0
770,12456951,14517,6815926,13329,1,100,N,N,N,CP_Units,TT_Task,DT_FixedDUR2,RV_OK,TK_Complete,CO02CC0150,"02C Form, Pour, Strip Fnd - 103/105-J & Table Tops",,,,0,0,0,0,320,0,0,0,,2006-08-02 00:00,2006-12-09 00:00,2007-08-25 08:01,2007-08-25 08:01,,2007-01-27 08:00,2007-01-27 08:00,,,2006-09-09 08:00,2006-11-14 17:00,,,,,PT_Normal,,,,,3rc7C5KjSJWlXE7y+giR2g,IS1JjxgPXkCKa6fMJrOBpR,,,N,0,0,,,2007-02-01 02:41,2007-02-04 01:05,hbe4678,hbe4678,,,0
771,12456952,14517,6815926,13329,1,100,N,N,N,CP_Units,TT_Task,DT_FixedDUR2,RV_OK,TK_Complete,CO02CC0160,"02C Form, Pour, Strip Fnd - 103-JTC",,,,0,0,0,0,192,0,0,0,,2006-07-29 08:00,2006-11-02 00:00,2008-02-18 08:01,2008-02-18 08:01,,2007-01-27 00:00,2007-01-27 00:00,,,2006-07-29 08:00,2006-08-24 17:00,,,,,PT_Normal,,,,,9OeMlx/HTsKJhC/PpvJMjw,reTgWroYl0KGep6/uKfNeh,,,N,0,0,,,2007-02-01 02:41,2007-02-04 01:05,hbe4678,hbe4678,,,0
772,12456953,14517,6815926,13329,1,100,N,N,N,CP_Units,TT_Task,DT_FixedDUR2,RV_OK,TK_Active,CO02CC0110,"02C Form, Pour, Strip Fnds - Major Fnds Gen'l",,1320.01666666667,0,208,0,0,0,288,0,0,0,,2006-06-24 08:00,,2007-08-07 08:01,2007-09-06 08:01,2007-02-25 17:00,2007-01-27 08:00,2007-02-25 17:00,2007-01-27 08:00,2007-02-25 17:00,2006-06-24 08:00,2006-08-03 17:00,,2007-08-07 08:01,2007-09-06 08:01,,PT_Normal,,,,,hywfuJwqSSmFnB9Tx87WNA,sOQxPOKqN0GGhGZg3TjLax,,,N,0,0,,,2007-02-01 02:41,2007-02-04 01:00,hbe4678,hbe4678,2007-01-27 08:00,2007-02-25 17:00,208
773,12456954,14517,6815926,13329,1,0,N,N,N,CP_Units,TT_Task,DT_FixedDUR2,RV_OK,TK_NotStart,CO02CC0120,"02C Form, Pour, Strip Fnds - Misc Fnds",,1296.01666666667,0,144,0,0,0,144,0,0,0,,,,2007-09-06 08:01,2007-10-20 08:01,,2007-03-01 08:00,2007-03-21 17:00,2007-03-01 08:00,2007-03-21 17:00,2007-03-01 08:00,2007-03-21 17:00,,2007-09-06 08:01,2007-10-20 08:01,,PT_Normal,,,,,H42kwlI9R0KRWtvOzG7o+w,eQfI3W8kpUibl5Dz1VbJ2x,,,N,0,0,,,2007-02-01 02:41,2007-02-04 01:00,hbe4678,hbe4678,2007-03-01 08:00,2007-03-21 17:00,144
774,12456955,14517,6815926,13329,1,0,N,N,N,CP_Units,TT_Task,DT_FixedDUR2,RV_OK,TK_Active,CO02GC0110,"02G Form, Pour, Strip Fnds - Major Fnds Gen'l",,1272.01666666667,0,240,0,0,0,288,0,0,0,,2006-10-15 00:00,,2007-08-27 08:01,2007-10-23 08:01,,2007-02-22 08:00,2007-03-28 17:00,2007-02-22 08:00,2007-03-28 17:00,2007-03-05 08:00,2007-04-15 17:00,,2007-08-27 08:01,2007-10-23 08:01,,PT_Normal,,,,,YtZBH8LTROWibY1Tn2Zz/Q,voz4+Kn6tUu16JoNVAsW8R,,,N,0,0,,,2007-02-01 02:41,2007-02-04 01:00,hbe4678,hbe4678,2007-02-22 08:00,2007-03-28 17:00,240
775,12456956,14517,6815926,13329,1,0,N,N,N,CP_Units,TT_Task,DT_FixedDUR2,RV_OK,TK_NotStart,CO02GC0120,"02G Form, Pour, Strip Fnds - Misc Fnds",,1320.01666666667,24,144,0,0,0,144,0,0,0,,,,2007-10-30 08:01,2007-11-20 08:01,,2007-03-29 08:00,2007-04-18 17:00,2007-03-29 08:00,2007-04-18 17:00,2007-03-29 08:00,2007-04-18 17:00,,2007-10-30 08:01,2007-11-20 08:01,,PT_Normal,,,,,HcaW466aR9OTJkTRRWTa7Q,ZSjhmswr50C5fs4iFiTvXh,,,N,0,0,,,2007-02-01 02:41,2007-02-04 01:00,hbe4678,hbe4678,2007-03-29 08:00,2007-04-18 17:00,144
776,12456957,14517,6815926,13329,1,0,N,N,N,CP_Units,TT_Task,DT_FixedDUR2,RV_OK,TK_Active,CO02GC0150,"02G Form, Pour, Strip Fnd - 101-J/JT & 2ea. Table Tops",,1072.01666666667,0,248,0,0,0,480,0,0,0,2006-12-18 08:00,2006-12-25 00:00,,2007-07-02 08:01,2007-08-07 08:01,2007-03-03 17:00,2007-01-27 08:00,2007-03-03 17:00,2007-01-27 08:00,2007-03-03 17:00,2007-01-06 08:00,2007-03-15 17:00,,2007-07-02 08:01,2007-08-07 08:01,CS_MSOA,PT_Normal,,,,,Oz85YTkYSs+8ZUOfH0d6yg,UZZiiPtHOEyAjQtmL47WyB,,,N,0,0,,,2007-02-01 02:41,2007-02-04 01:00,hbe4678,hbe4678,2007-01-27 08:00,2007-03-03 17:00,248
777,12456958,14517,6815926,13329,1,100,N,N,N,CP_Units,TT_Task,DT_FixedDUR2,RV_OK,TK_Complete,CO02GC0160,"02G Form, Pour, Strip Fnd - 102-J Fd Gas Compr. & Aux.",,,,0,0,0,0,240,0,0,0,,2006-09-12 00:00,2006-11-29 00:00,2007-09-03 08:01,2007-09-03 08:01,,2007-01-27 00:00,2007-01-27 00:00,,,2006-11-18 08:00,2006-12-21 17:00,,,,,PT_Normal,,,,,ZQ1lILQVSUuGa5dtna7qeg,mWTLEII5WUuODQ2c5m9x6R,,,N,0,0,,,2007-02-01 02:41,2007-02-04 01:05,hbe4678,hbe4678,,,0
778,12456959,14517,6815926,13329,1,100,N,N,N,CP_Units,TT_Task,DT_FixedDUR2,RV_OK,TK_Complete,CO02JC0110,"02J Form, Pour, Strip Fnds - Major Fnds Gen'l",,,,0,0,0,0,144,0,0,0,,2006-05-01 08:00,2006-08-16 00:00,2007-11-14 08:01,2007-11-14 08:01,,2007-01-27 00:00,2007-01-27 00:00,,,2006-05-01 08:00,2006-05-21 17:00,,,,,PT_Normal,,,,,fx+XqjV9Tc6tSysd0TcAqg,tduSW8o47Uqnl8nUNAxAqx,,,N,0,0,,,2007-02-01 02:41,2007-02-04 01:05,hbe4678,hbe4678,,,0
779,12456960,14517,6815926,13329,1,0,N,N,N,CP_Units,TT_Task,DT_FixedDUR2,RV_OK,TK_NotStart,CO02JC0120,"02J Form, Pour, Strip Fnds - Misc Fnds",,1688.01666666667,264,96,0,0,0,96,0,0,0,,,,2007-11-25 08:01,2007-12-09 08:01,,2007-03-01 08:00,2007-03-14 17:00,2007-03-01 08:00,2007-03-14 17:00,2007-03-01 08:00,2007-03-14 17:00,,2007-11-25 08:01,2007-12-09 08:01,,PT_Normal,,,,,cSf9mkaZQCi05dJ2/uN8nQ,i9SThgJN5EGK8LpZPpD5NR,,,N,0,0,,,2007-02-01 02:41,2007-02-04 01:00,hbe4678,hbe4678,2007-03-01 08:00,2007-03-14 17:00,96
780,12456961,14517,6815926,13329,1,100,N,N,N,CP_Units,TT_Task,DT_FixedDUR2,RV_OK,TK_Complete,CO02JC0150,"02J Form, Pour, Strip Fnd - 104-D2 (Low Temp Shift Converter)",,,,0,0,0,0,144,0,0,0,,2006-04-30 00:00,2006-12-07 00:00,2007-08-12 08:01,2007-08-12 08:01,,2007-01-27 00:00,2007-01-27 00:00,,,2006-07-12 08:00,2006-08-01 17:00,,,,,PT_Normal,,,,,97x2CRsTSTevXH5Mts7xKw,dTJT5FqVGkOO7lic3HbqOx,,,N,0,0,,,2007-02-01 02:41,2007-02-04 01:05,hbe4678,hbe4678,,,0
781,12456962,14517,6815926,13329,1,100,N,N,N,CP_Units,TT_Task,DT_FixedDUR2,RV_OK,TK_Complete,CO02JC0160,"02J Form, Pour, Strip Fnd - 104-D1 (High Temp Shift Converter)",,,,0,0,0,0,144,0,0,0,,2006-04-30 00:00,2006-12-26 00:00,2007-08-18 08:01,2007-08-18 08:01,,2007-01-27 00:00,2007-01-27 00:00,,,2006-05-04 08:00,2006-05-24 17:00,,,,,PT_Normal,,,,,Y0SIbTArRQ+MHQyIgTcu2A,rs1EWUszcE2zS3TXnxRCTR,,,N,0,0,,,2007-02-01 02:41,2007-02-04 01:05,hbe4678,hbe4678,,,0
782,12456963,14517,6815926,13329,1,0,N,N,N,CP_Units,TT_Task,DT_FixedDUR2,RV_OK,TK_Active,CO02KC0110,"02K Form, Pour, Strip Fnds - Major Fnds Gen'l",,1536.01666666667,0,232,0,0,0,144,0,0,0,,2006-08-05 00:00,,2007-09-08 08:01,2007-11-03 08:01,2007-02-28 17:00,2007-01-27 08:00,2007-02-28 17:00,2007-01-27 08:00,2007-02-28 17:00,2006-08-26 08:00,2006-09-14 17:00,,2007-09-08 08:01,2007-11-03 08:01,,PT_Normal,,,,,6alk8U55RvGBYIsUryMnPw,Xmt8gYvWQkSJDUTrcBO3rR,,,N,0,0,,,2007-02-01 02:41,2007-02-04 01:00,hbe4678,hbe4678,2007-01-27 08:00,2007-02-28 17:00,232
783,12456964,14517,6815926,13329,1,0,N,N,N,CP_Units,TT_Task,DT_FixedDUR2,RV_OK,TK_NotStart,CO02KC0120,"02K Form, Pour, Strip Fnds - Misc Fnds",,1712.01666666667,264,96,0,0,0,96,0,0,0,,,,2007-11-28 08:01,2007-12-12 08:01,,2007-03-01 08:00,2007-03-14 17:00,2007-03-01 08:00,2007-03-14 17:00,2007-03-01 08:00,2007-03-14 17:00,,2007-11-28 08:01,2007-12-12 08:01,,PT_Normal,,,,,if88kILZS7ChLb3VjhtOkA,uhTt0v+VuUqRyMCUNYYUoR,,,N,0,0,,,2007-02-01 02:41,2007-02-04 01:00,hbe4678,hbe4678,2007-03-01 08:00,2007-03-14 17:00,96
784,12456965,14517,6815926,13329,1,100,N,N,N,CP_Units,TT_Task,DT_FixedDUR2,RV_OK,TK_Complete,CO02KC0150,"02K Form, Pour, Strip Fnd - 114-F (Benfield Solution Tank)",,,,0,0,0,0,144,0,0,0,,2006-05-04 08:00,2006-08-22 17:00,2007-05-20 08:01,2007-05-20 08:01,,2007-01-27 00:00,2007-01-27 00:00,,,2006-05-04 08:00,2006-05-24 17:00,,,,,PT_Normal,,,,,9fJX2ylfQDuvUp/xN1bC2w,GRLNxhTyLkGRsQzonFLgTx,,,N,0,0,,,2007-02-01 02:41,2007-02-04 01:05,hbe4678,hbe4678,,,0
785,12456966,14517,6815926,13329,1,100,N,N,N,CP_Units,TT_Task,DT_FixedDUR2,RV_OK,TK_Complete,CO02MC0110,"02M Form, Pour, Strip Fnds - Major Fnds Gen'l",,,,0,0,0,0,144,0,0,0,,2006-05-03 08:00,2006-09-30 00:00,2007-12-31 08:01,2007-12-31 08:01,,2007-01-27 00:00,2007-01-27 00:00,,,2006-05-03 08:00,2006-05-23 17:00,,,,,PT_Normal,,,,,oZ+tXVyqSpiQR5F6FoDC6w,rJ7hYDadDEy+JJajNGMvKh,,,N,0,0,,,2007-02-01 02:41,2007-02-04 01:05,hbe4678,hbe4678,,,0
786,12456967,14517,6815926,13329,1,0,N,N,N,CP_Units,TT_Task,DT_FixedDUR2,RV_OK,TK_Active,CO02MC0120,"02M Form, Pour, Strip Fnds - Misc Fnds",,1912.01666666667,264,96,0,0,0,96,0,0,0,,2006-09-10 00:00,,2008-01-02 08:01,2008-01-16 08:01,,2007-03-01 08:00,2007-03-14 17:00,2007-03-01 08:00,2007-03-14 17:00,2007-01-25 08:00,2007-02-07 17:00,,2008-01-02 08:01,2008-01-16 08:01,,PT_Normal,,,,,8UOErKfbQbeJDVyD5v8U8w,DTVSzD7c60a9h7vXAe8bSx,,,N,0,0,,,2007-02-01 02:41,2007-02-04 01:00,hbe4678,hbe4678,2007-03-01 08:00,2007-03-14 17:00,96
787,12456968,14517,6815926,13329,1,100,N,N,N,CP_Units,TT_Task,DT_FixedDUR2,RV_OK,TK_Complete,CO02MC0140,02M Form Pour Strip Fnds -  Structure,,,,0,0,0,0,192,0,0,0,,2006-05-03 08:00,2007-01-11 00:00,2007-11-06 08:01,2007-11-06 08:01,,2007-01-27 00:00,2007-01-27 00:00,,,2006-05-03 08:00,2006-05-30 17:00,,,,,PT_Normal,,,,,voc3FIW8Q8Sa8TutVFKlHA,3k1ENjUC0UKYLyvQBAPOqB,,,N,0,0,,,2007-02-01 02:41,2007-02-04 01:05,hbe4678,hbe4678,,,0
788,12456969,14517,6815926,13329,1,100,N,N,N,CP_Units,TT_Task,DT_FixedDUR2,RV_OK,TK_Complete,CO02MC0150,"02M Form, Pour, Strip Fnd - 105-D (Ammonia Synthesis Converter)",,,,0,0,0,0,192,0,0,0,,2006-05-29 08:00,2006-09-11 00:00,2007-09-04 08:01,2007-09-04 08:01,,2007-01-27 00:00,2007-01-27 00:00,,,2006-05-29 08:00,2006-06-25 17:00,,,,,PT_Normal,,,,,RRP9GvY2QWm7yITD9Kl2UA,QwBKAc+x7E2oMwQMSPQ/9R,,,N,0,0,,,2007-02-01 02:41,2007-02-04 01:05,hbe4678,hbe4678,,,0
789,12456970,14517,6815926,13329,1,0,N,N,N,CP_Units,TT_Task,DT_FixedDUR2,RV_OK,TK_Active,CO02AC0110,"02A Form, Pour, Strip Fnds - Major Fnds",,1512.01666666667,0,496,0,0,0,160,0,0,0,,2006-05-15 08:00,,2007-09-04 08:01,2007-12-08 08:01,2007-04-08 17:00,2007-01-27 08:00,2007-04-08 17:00,2007-01-27 08:00,2007-04-08 17:00,2006-05-15 08:00,2006-06-06 17:00,,2007-09-04 08:01,2007-12-08 08:01,,PT_Normal,,,,,f9PjHNs/RYCjgHRhJ7X6JQ,sOQxPOKqN0GGhGZg3TjLax,,,N,0,0,,,2007-02-01 02:41,2007-02-04 01:00,hbe4678,hbe4678,2007-01-27 08:00,2007-04-08 17:00,496
790,12456971,14517,6815926,13329,1,0,N,N,N,CP_Units,TT_Task,DT_FixedDUR2,RV_OK,TK_NotStart,CO02AC0120,"02A Form, Pour, Strip Fnds - Misc Fnds",,1512.01666666667,0,96,0,0,0,96,0,0,0,,,,2007-12-08 08:01,2007-12-27 08:01,,2007-04-09 08:00,2007-04-22 17:00,2007-04-09 08:00,2007-04-22 17:00,2007-04-09 08:00,2007-04-22 17:00,,2007-12-08 08:01,2007-12-27 08:01,,PT_Normal,,,,,pQWf43VJRkSM1KhSIvqpgw,eQfI3W8kpUibl5Dz1VbJ2x,,,N,0,0,,,2007-02-01 02:41,2007-02-04 01:00,hbe4678,hbe4678,2007-04-09 08:00,2007-04-22 17:00,96
791,12456972,14517,6815926,13329,1,0,N,N,N,CP_Units,TT_Task,DT_FixedDUR2,RV_OK,TK_Active,CO02LC0140,02L Form Pour Strip Fnds - 02L Structure,,360.016666666667,0,232,0,0,0,192,0,0,0,,2006-08-28 00:00,,2007-03-20 08:01,2007-04-23 08:01,2007-02-28 17:00,2007-01-27 08:00,2007-02-28 17:00,2007-01-27 08:00,2007-02-28 17:00,2006-10-04 08:00,2006-11-15 17:00,,2007-03-20 08:01,2007-04-23 08:01,,PT_Normal,,,,,N1pbwPWQTVCJJAG2DjZb9A,,,,N,0,0,,,2007-02-01 02:41,2007-02-04 01:00,hbe4678,hbe4678,2007-01-27 08:00,2007-02-28 17:00,232
792,12456973,14517,6815926,13329,1,100,N,N,N,CP_Units,TT_Task,DT_FixedDUR2,RV_OK,TK_Complete,CO02LC0150,"02L Form, Pour, Strip Fnd - 101-E (CO2 Absorber)",,,,0,0,0,0,192,0,0,0,,2006-05-03 08:00,2006-09-18 00:00,2007-03-20 08:01,2007-03-20 08:01,,2007-01-27 00:00,2007-01-27 00:00,,,2006-05-03 08:00,2006-05-30 17:00,,,,,PT_Normal,,,,,sfYtyDO2RRuMj6NhEgXV8w,,,,N,0,0,,,2007-02-01 02:41,2007-02-04 01:05,hbe4678,hbe4678,,,0
793,12456974,14517,6815926,13329,1,100,N,N,N,CP_Units,TT_Task,DT_FixedDUR2,RV_OK,TK_Complete,CO02LC0160,"02L Form, Pour, Strip Fnd - 102-E (CO2 Stripper)",,,,0,0,0,0,280,0,0,0,,2006-06-18 08:00,2006-11-26 00:00,2007-03-20 08:01,2007-03-20 08:01,,2007-01-27 00:00,2007-01-27 00:00,,,2006-06-18 08:00,2006-07-27 17:00,,,,,PT_Normal,,,,,J5R12mxCRZWBQopmTfFjHw,,,,N,0,0,,,2007-02-01 02:41,2007-02-04 01:05,hbe4678,hbe4678,,,0
794,12456975,14517,6815926,13329,1,0,N,N,N,CP_Units,TT_Task,DT_FixedDUR2,RV_OK,TK_Active,CO02LC0110,"02L Form, Pour, Strip Fnds - Major Fnds Gen'l",,984.016666666667,0,232,0,0,0,192,0,0,0,,2006-06-18 08:00,,2007-06-19 08:01,2007-07-23 08:01,2007-02-28 17:00,2007-01-27 08:00,2007-02-28 17:00,2007-01-27 08:00,2007-02-28 17:00,2006-06-18 08:00,2006-07-15 17:00,,2007-06-19 08:01,2007-07-23 08:01,,PT_Normal,,,,,B7ImzWsdRv+ziScpPi+gxw,,,,N,0,0,,,2007-02-01 02:41,2007-02-04 01:00,hbe4678,hbe4678,2007-01-27 08:00,2007-02-28 17:00,232
795,12456976,14517,6815926,13329,1,0,N,N,N,CP_Units,TT_Task,DT_FixedDUR2,RV_OK,TK_Active,CO02LC0120,"02L Form, Pour, Strip Fnds - Misc Fnds",,984.016666666667,0,144,0,0,0,144,0,0,0,,2006-11-16 00:00,,2007-07-23 08:01,2007-08-13 08:01,,2007-03-01 08:00,2007-03-21 17:00,2007-03-01 08:00,2007-03-21 17:00,2007-03-03 08:00,2007-03-22 17:00,,2007-07-23 08:01,2007-08-13 08:01,,PT_Normal,,,,,btExz/ArTK+9Ad3jUnGw+g,,,,N,0,0,,,2007-02-01 02:41,2007-02-04 01:00,hbe4678,hbe4678,2007-03-01 08:00,2007-03-21 17:00,144
796,12456977,14517,6815926,13329,1,100,N,N,N,CP_Units,TT_Task,DT_FixedDUR2,RV_OK,TK_Complete,CO02BC0110,"02B Form, Pour, Strip Fnds - Major Fnds",,,,0,0,0,0,240,0,0,0,,2006-05-09 08:00,2006-08-08 00:00,2007-12-04 08:01,2007-12-04 08:01,,2007-01-27 00:00,2007-01-27 00:00,,,2006-05-09 08:00,2006-06-12 17:00,,,,,PT_Normal,,,,,0A7gWMVOTUSj1FTY9BFqfw,RJXFZdJTg0uy2puX8fjcXB,,,N,0,0,,,2007-02-01 02:41,2007-02-04 01:05,hbe4678,hbe4678,,,0
797,12456978,14517,6815926,13329,1,100,N,N,N,CP_Units,TT_Task,DT_FixedDUR2,RV_OK,TK_Complete,CO02BC0120,"02B Form, Pour, Strip Fnds - Misc Fnds",,,,0,0,0,0,96,0,0,0,,2006-08-08 00:00,2006-08-08 00:00,2008-03-15 08:01,2008-03-15 08:01,,2007-02-28 17:00,2007-02-28 17:00,,,2007-01-06 08:00,2007-01-18 17:00,,,,,PT_Normal,,,,,tlaf0vCGSgyfkEWCcMb1Mw,uRw5HfT+rUWzPU1Ud124dR,,,N,0,0,,,2007-02-01 02:41,2007-02-04 01:05,hbe4678,hbe4678,,,0
798,12456979,14517,6815926,13329,1,0,N,N,N,CP_Units,TT_Task,DT_FixedDUR2,RV_OK,TK_Active,CO02DC0110,"02D Form, Pour, Strip Fnds - Major Fnds",,2016.01666666667,0,96,0,0,0,312,0,0,0,,2006-06-11 08:00,,2007-12-09 08:01,2007-12-29 08:01,2007-02-08 17:00,2007-01-27 08:00,2007-02-08 17:00,2007-01-27 08:00,2007-02-08 17:00,2006-06-11 08:00,2006-07-25 17:00,,2007-12-09 08:01,2007-12-29 08:01,,PT_Normal,,,,,xYANeZX1Th2LAbhHSzyo9Q,kgU74qEmY0uToAk2+ewX3h,,,N,0,0,,,2007-02-01 02:41,2007-02-04 01:00,hbe4678,hbe4678,2007-01-27 08:00,2007-02-08 17:00,96
799,12456980,14517,6815926,13329,1,0,N,N,N,CP_Units,TT_Task,DT_FixedDUR2,RV_OK,TK_NotStart,CO02DC0120,"02D Form, Pour, Strip Fnds - Misc Fnds",,2080,0,0,0,0,0,96,0,0,0,,,,2008-01-26 17:00,2008-01-26 17:00,2006-12-06 17:00,2007-03-01 08:00,2007-03-01 08:00,2007-03-01 08:00,2007-03-01 08:00,2007-03-01 08:00,2007-03-14 17:00,,2008-01-26 17:00,2008-01-26 17:00,,PT_Normal,,,,,ZW/+BqkBQ121ErGCg9cWhQ,kLcyaj6WWU+0smNNelnFmh,,,N,0,0,,,2007-02-01 02:41,2007-02-01 02:43,hbe4678,hbe4678,2007-03-01 08:00,2007-03-01 08:00,0
800,12456981,14517,6815926,13329,1,100,N,N,N,CP_Units,TT_Task,DT_FixedDUR2,RV_OK,TK_Complete,CO02EC0110,"02E Form, Pour, Strip Fnds - Major Fnds Gen'l",,,,0,0,0,0,264,0,0,0,,2006-06-24 00:00,2006-11-06 00:00,2007-12-09 08:01,2007-12-09 08:01,,2007-01-27 00:00,2007-01-27 00:00,,,2006-09-25 08:01,2006-11-22 08:01,,,,,PT_Normal,,,,,wtgeOCq4TZaKs+ia1h4WQg,mramGI8l8E6FnMiVCdfylx,,,N,0,0,,,2007-02-01 02:41,2007-02-04 01:05,hbe4678,hbe4678,,,0
801,12456982,14517,6815926,13329,1,0,N,N,N,CP_Units,TT_Task,DT_FixedDUR2,RV_OK,TK_Active,CO02EC0120,"02E Form, Pour, Strip Fnds - Misc Fnds",,1816.01666666667,264,96,0,0,0,96,0,0,0,,2006-11-02 00:00,,2007-12-13 08:01,2008-01-02 08:01,,2007-03-01 08:00,2007-03-14 17:00,2007-03-01 08:00,2007-03-14 17:00,2007-01-31 08:00,2007-02-13 17:00,,2007-12-13 08:01,2008-01-02 08:01,,PT_Normal,,,,,x2MjTWJ/TqaKP6OBZkRrJg,dAAtjmihaEC87HlWIel5oB,,,N,0,0,,,2007-02-01 02:41,2007-02-04 01:00,hbe4678,hbe4678,2007-03-01 08:00,2007-03-14 17:00,96
802,12456983,14517,6815926,13329,1,100,N,N,N,CP_Units,TT_Task,DT_FixedDUR2,RV_OK,TK_Complete,CO02EC0140,02E Form Pour Strip Fnds -  Structure,,,,0,0,0,0,144,0,0,0,,2006-06-24 08:00,2006-09-12 00:00,2007-12-09 08:01,2007-12-09 08:01,,2007-01-27 00:00,2007-01-27 00:00,,,2006-06-24 08:00,2006-07-13 17:00,,,,,PT_Normal,,,,,wIFWSnLpQQKsQ61QKK8w5w,JL4fJl7vbUWDg1q7XkV9hx,,,N,0,0,,,2007-02-01 02:41,2007-02-04 01:05,hbe4678,hbe4678,,,0
803,12456984,14517,6815926,13329,1,0,N,N,N,CP_Units,TT_Task,DT_FixedDUR2,RV_OK,TK_Active,CO02FC0110,"02F Form, Pour, Strip Fnds - Major Fnds Gen'l",,1872.01666666667,0,232,0,0,0,232,0,0,0,,2006-06-24 08:00,,2007-11-18 08:01,2007-12-27 08:01,2007-02-28 17:00,2007-01-27 08:00,2007-02-28 17:00,2007-01-27 08:00,2007-02-28 17:00,2006-06-24 08:00,2006-07-26 17:00,,2007-11-18 08:01,2007-12-27 08:01,,PT_Normal,,,,,VVRxhdCvQ4OI/HHI316bIg,w6Th9KinPkSmZa+I8GYMjB,,,N,0,0,,,2007-02-01 02:41,2007-02-04 01:00,hbe4678,hbe4678,2007-01-27 08:00,2007-02-28 17:00,232
804,12456985,14517,6815926,13329,1,0,N,N,N,CP_Units,TT_Task,DT_FixedDUR2,RV_OK,TK_Active,CO02FC0120,"02F Form, Pour, Strip Fnds - Misc Fnds",,1872.01666666667,264,96,0,0,0,96,0,0,0,,2006-12-05 00:00,,2007-12-27 08:01,2008-01-10 08:01,,2007-03-01 08:00,2007-03-14 17:00,2007-03-01 08:00,2007-03-14 17:00,2007-03-01 08:00,2007-03-14 17:00,,2007-12-27 08:01,2008-01-10 08:01,,PT_Normal,,,,,ZS5kal2+S+CpwgTDDIdu7w,A89XO2D2XUmPuoYp7YGlzx,,,N,0,0,,,2007-02-01 02:41,2007-02-04 01:00,hbe4678,hbe4678,2007-03-01 08:00,2007-03-14 17:00,96
805,12456986,14517,6815926,13329,1,0,N,N,N,CP_Units,TT_WBS,DT_FixedDUR2,RV_OK,TK_Active,WO020C0100,020 Concrete & Excavation,1355,1720,4768,592,176003.84,87728.82,263732.66,2328,0,0,0,,2006-04-20 08:00,,2007-03-20 08:01,2008-01-26 17:00,,2007-01-27 08:00,2007-04-22 17:00,2007-01-27 08:00,2007-04-22 17:00,2006-04-20 08:00,2007-04-22 17:00,,2007-03-20 08:01,2008-01-26 17:00,,PT_Normal,,,,,L5SCoMKzQLGA9Yz/HM7LAQ,GFQaUbYwqEy1za7LqliF2x,,,N,0,0,,,2007-02-01 02:41,2007-02-04 01:05,hbe4678,hbe4678,2007-01-27 08:00,2007-04-22 17:00,592
806,12456987,14517,6815931,13329,1,0,N,N,N,CP_Units,TT_Task,DT_FixedDUR2,RV_OK,TK_NotStart,CO02CE0130,"02C Power/Control JB's, Tray, Cable, Termination",,704.016666666667,0,840,0,0,0,840,0,0,0,,,,2007-11-03 08:01,2008-03-10 08:01,,2007-07-01 08:00,2007-11-21 17:00,2007-07-01 08:00,2007-11-21 17:00,2007-07-01 08:00,2007-11-21 17:00,,2007-11-03 08:01,2008-03-10 08:01,,PT_Normal,,,,,gnp1XGC2Ri6fBljddv1UHg,pGFlqDKeOEewKwep8qiusB,,,N,0,0,,,2007-02-01 02:41,2007-02-04 01:00,hbe4678,hbe4678,2007-07-01 08:00,2007-11-21 17:00,840
807,12456988,14517,6815931,13329,1,0,N,N,N,CP_Units,TT_Task,DT_FixedDUR2,RV_OK,TK_NotStart,CO02KE0120,02K Lighting Fixture Installation/Termination,,1152,599.983333333333,144,0,0,0,144,0,0,0,,,,2008-03-22 08:01,2008-04-12 08:01,,2007-09-08 08:01,2007-10-21 08:01,2007-09-08 08:01,2007-10-21 08:01,2007-09-08 08:01,2007-10-21 08:01,,2008-03-22 08:01,2008-04-12 08:01,,PT_Normal,,,,,ze3lB3QXQEiuDjKuWU+JCA,TM0rJ9hLS0iKV0bdu5g6GR,,,N,0,0,,,2007-02-01 02:41,2007-02-04 01:00,hbe4678,hbe4678,2007-09-08 08:01,2007-10-21 08:01,144
808,12456989,14517,6815931,13329,1,0,N,N,N,CP_Units,TT_Task,DT_FixedDUR2,RV_OK,TK_NotStart,CO02KE0130,"02K Power/Control JB's, Tray, Cable, Termination",,616,0,528,0,0,0,528,0,0,0,,,,2007-12-25 08:01,2008-03-11 08:01,,2007-08-29 08:01,2007-12-06 08:01,2007-08-29 08:01,2007-12-06 08:01,2007-08-29 08:01,2007-12-06 08:01,,2007-12-25 08:01,2008-03-11 08:01,,PT_Normal,,,,,ZYX6a0KeTsClUKuYxuQUWQ,+W4jCldOdUyHr4IQJW+lwB,,,N,0,0,,,2007-02-01 02:41,2007-02-01 02:43,hbe4678,hbe4678,2007-08-29 08:01,2007-12-06 08:01,528
809,12456990,14517,6815931,13329,1,0,N,N,N,CP_Units,TT_Task,DT_FixedDUR2,RV_OK,TK_NotStart,CO02ME0110,"02M Lighting JB's, Stands, Tray & Cable",,1400.01666666667,0,192,0,0,0,192,0,0,0,,,,2008-03-01 08:01,2008-03-29 08:01,,2007-07-12 08:00,2007-08-08 17:00,2007-07-12 08:00,2007-08-08 17:00,2007-07-12 08:00,2007-08-08 17:00,,2008-03-01 08:01,2008-03-29 08:01,,PT_Normal,,,,,r5uL7DWcR+a+wno+uaBkjQ,O/7xY0Tv00y7xnOwqpeUIx,,,N,0,0,,,2007-02-01 02:41,2007-02-04 01:00,hbe4678,hbe4678,2007-07-12 08:00,2007-08-08 17:00,192
810,12456991,14517,6815931,13329,1,0,N,N,N,CP_Units,TT_Task,DT_FixedDUR2,RV_OK,TK_NotStart,CO02ME0120,02M Lighting Fixture Installation/Termination,,1400.01666666667,872,96,0,0,0,96,0,0,0,,,,2008-03-29 08:01,2008-04-12 08:01,,2007-08-09 08:00,2007-08-22 17:00,2007-08-09 08:00,2007-08-22 17:00,2007-08-09 08:00,2007-08-22 17:00,,2008-03-29 08:01,2008-04-12 08:01,,PT_Normal,,,,,ZY8wBdv2Sn2zb0++6Zv+ow,plauUlzc3kGzIkHd1Aj2cR,,,N,0,0,,,2007-02-01 02:41,2007-02-04 01:00,hbe4678,hbe4678,2007-08-09 08:00,2007-08-22 17:00,96
811,12456992,14517,6815931,13329,1,0,N,N,N,CP_Units,TT_Task,DT_FixedDUR2,RV_OK,TK_NotStart,CO02ME0130,"02M Power/Control JB's, Tray, Cable, Termination",,760.016666666667,0,376,0,0,0,376,0,0,0,,,,2008-01-23 08:01,2008-03-18 08:01,,2007-09-06 08:00,2007-11-21 17:00,2007-09-06 08:00,2007-11-21 17:00,2007-09-06 08:00,2007-11-21 17:00,,2008-01-23 08:01,2008-03-18 08:01,,PT_Normal,,,,,SKNUx7AfTeqrCxX2lV5s3Q,KwCkJSoehEaxArC91kaI3x,,,N,0,0,,,2007-02-01 02:41,2007-02-04 01:00,hbe4678,hbe4678,2007-09-06 08:00,2007-11-21 17:00,376
812,12456993,14517,6815931,13329,1,0,N,N,N,CP_Units,TT_Task,DT_FixedDUR2,RV_OK,TK_NotStart,CO02NE0110,"02N Lighting JB's, Stands, Tray & Cable",,1216.01666666667,0,144,0,0,0,144,0,0,0,,,,2008-03-15 08:01,2008-04-05 08:01,,2007-08-22 08:00,2007-09-11 17:00,2007-08-22 08:00,2007-09-11 17:00,2007-08-22 08:00,2007-09-11 17:00,,2008-03-15 08:01,2008-04-05 08:01,,PT_Normal,,,,,eol/kp+fRm+1S/yQirZOZA,sw4TQDccjUOLspUKCV8trx,,,N,0,0,,,2007-02-01 02:41,2007-02-04 01:00,hbe4678,hbe4678,2007-08-22 08:00,2007-09-11 17:00,144
813,12456994,14517,6815931,13329,1,0,N,N,N,CP_Units,TT_Task,DT_FixedDUR2,RV_OK,TK_NotStart,CO02NE0120,02N Lighting Fixture Installation/Termination,,1216.01666666667,664,48,0,0,0,48,0,0,0,,,,2008-04-05 08:01,2008-04-12 08:01,,2007-09-12 08:00,2007-09-24 17:00,2007-09-12 08:00,2007-09-24 17:00,2007-09-12 08:00,2007-09-24 17:00,,2008-04-05 08:01,2008-04-12 08:01,,PT_Normal,,,,,xCggFtdtRlmk/3aZBo3Osw,12Cv1+FYv0i8gzefg5oz9x,,,N,0,0,,,2007-02-01 02:41,2007-02-04 01:00,hbe4678,hbe4678,2007-09-12 08:00,2007-09-24 17:00,48
814,12456995,14517,6815931,13329,1,0,N,N,N,CP_Units,TT_Task,DT_FixedDUR2,RV_OK,TK_NotStart,CO02NE0130,"02N Power/Control JB's, Tray, Cable, Termination",,640.016666666667,0,72,0,0,0,72,0,0,0,,,,2008-03-23 08:01,2008-04-02 08:01,,2007-12-15 08:00,2007-12-30 17:00,2007-12-15 08:00,2007-12-30 17:00,2007-12-15 08:00,2007-12-30 17:00,,2008-03-23 08:01,2008-04-02 08:01,,PT_Normal,,,,,nE/9+KboReef/Uyq3kSnyQ,2rTJUHB2nU+JSbxrX4Qm+x,,,N,0,0,,,2007-02-01 02:41,2007-02-04 01:00,hbe4678,hbe4678,2007-12-15 08:00,2007-12-30 17:00,72
815,12456996,14517,6815931,13329,1,0,N,N,N,CP_Units,TT_Task,DT_FixedDUR2,RV_OK,TK_NotStart,CO02PE0110,"02P Lighting JB's, Stands, Tray & Cable",,1200.01666666667,0,48,0,0,0,48,0,0,0,,,,2008-03-16 08:01,2008-03-23 08:01,,2007-08-26 08:00,2007-09-01 17:00,2007-08-26 08:00,2007-09-01 17:00,2007-08-26 08:00,2007-09-01 17:00,,2008-03-16 08:01,2008-03-23 08:01,,PT_Normal,,,,,oMrSgotvTUqFLCttrxN47g,PJXr3sTeM0SUdvNsoZkMaB,,,N,0,0,,,2007-02-01 02:41,2007-02-04 01:00,hbe4678,hbe4678,2007-08-26 08:00,2007-09-01 17:00,48
816,12456997,14517,6815931,13329,1,0,N,N,N,CP_Units,TT_Task,DT_FixedDUR2,RV_OK,TK_NotStart,CO02PE0120,02P Lighting Fixture Installation/Termination,,1288.01666666667,744,48,0,0,0,48,0,0,0,,,,2008-04-05 08:01,2008-04-12 08:01,,2007-09-02 08:00,2007-09-08 17:00,2007-09-02 08:00,2007-09-08 17:00,2007-09-02 08:00,2007-09-08 17:00,,2008-04-05 08:01,2008-04-12 08:01,,PT_Normal,,,,,TNrc5a3tS4CIymVPGcdvAg,bPgDmQOeZkyMmfXebyYE+x,,,N,0,0,,,2007-02-01 02:41,2007-02-04 01:00,hbe4678,hbe4678,2007-09-02 08:00,2007-09-08 17:00,48
817,12456998,14517,6815931,13329,1,0,N,N,N,CP_Units,TT_Task,DT_FixedDUR2,RV_OK,TK_NotStart,CO02QE0110,"02Q Lighting JB's, Stands, Tray & Cable",,1296.01666666667,0,48,0,0,0,48,0,0,0,,,,2008-03-16 08:01,2008-03-23 08:01,,2007-08-12 08:00,2007-08-18 17:00,2007-08-12 08:00,2007-08-18 17:00,2007-08-12 08:00,2007-08-18 17:00,,2008-03-16 08:01,2008-03-23 08:01,,PT_Normal,,,,,r8pFcAOHQkeAfxUFV/RVHw,pIh3xihOpEqypwnfCiIjTR,,,N,0,0,,,2007-02-01 02:41,2007-02-04 01:00,hbe4678,hbe4678,2007-08-12 08:00,2007-08-18 17:00,48
818,12456999,14517,6815931,13329,1,0,N,N,N,CP_Units,TT_Task,DT_FixedDUR2,RV_OK,TK_NotStart,CO02QE0120,02Q Lighting Fixture Installation/Termination,,1384.01666666667,848,48,0,0,0,48,0,0,0,,,,2008-04-05 08:01,2008-04-12 08:01,,2007-08-19 08:00,2007-08-25 17:00,2007-08-19 08:00,2007-08-25 17:00,2007-08-19 08:00,2007-08-25 17:00,,2008-04-05 08:01,2008-04-12 08:01,,PT_Normal,,,,,HN4sGPEdSPiTKhrx0cr99Q,4SL+aLxBIk+StqWqFgEHbh,,,N,0,0,,,2007-02-01 02:41,2007-02-04 01:00,hbe4678,hbe4678,2007-08-19 08:00,2007-08-25 17:00,48
819,12457000,14517,6815931,13329,1,0,N,N,N,CP_Units,TT_Task,DT_FixedDUR2,RV_OK,TK_NotStart,CO02YE0110,"02Y Lighting JB's, Stands, Tray & Cable",,720.016666666667,0,576,0,0,0,576,0,0,0,,,,2007-12-03 08:01,2008-03-02 08:01,,2007-07-29 08:00,2007-11-11 17:00,2007-07-29 08:00,2007-11-11 17:00,2007-07-29 08:00,2007-11-11 17:00,,2007-12-03 08:01,2008-03-02 08:01,,PT_Normal,,,,,rrKZN57cTymzs607kB75RA,Iq8CqFKdTE6O8cKU1q7w/h,,,N,0,0,,,2007-02-01 02:41,2007-02-04 01:00,hbe4678,hbe4678,2007-07-29 08:00,2007-11-11 17:00,576
820,12457001,14517,6815931,13329,1,0,N,N,N,CP_Units,TT_Task,DT_FixedDUR2,RV_OK,TK_NotStart,CO02YE0120,02Y Lighting Fixture Installation/Termination,,720.016666666667,248,280,0,0,0,280,0,0,0,,,,2008-03-02 08:01,2008-04-12 08:01,,2007-11-12 08:00,2007-12-27 17:00,2007-11-12 08:00,2007-12-27 17:00,2007-11-12 08:00,2007-12-27 17:00,,2008-03-02 08:01,2008-04-12 08:01,,PT_Normal,,,,,edWQrJiVSuqTBo2HIihNWQ,9PwN1bwDlkC2LlCKcS4I9h,,,N,0,0,,,2007-02-01 02:41,2007-02-04 01:00,hbe4678,hbe4678,2007-11-12 08:00,2007-12-27 17:00,280
821,12457002,14517,6815931,13329,1,0,N,N,N,CP_Units,TT_Task,DT_FixedDUR2,RV_OK,TK_NotStart,CO02YE0130,"02Y Power/Control JB's, Tray, Cable, Termination",,-280,0,672,0,0,0,672,0,0,0,,,,2007-07-09 08:00,2007-11-05 17:00,,2007-08-19 08:00,2007-12-16 17:00,2007-08-19 08:00,2007-12-16 17:00,2007-08-19 08:00,2007-12-16 17:00,,2007-07-09 08:00,2007-11-05 17:00,,PT_Normal,,,,,SpuQNctZTrCKAeCRkGL8vA,PISeqnbO+kmxGER3HFNGox,,,N,0,0,,,2007-02-01 02:41,2007-02-01 02:43,hbe4678,hbe4678,2007-08-19 08:00,2007-12-16 17:00,672
822,12457003,14517,6815931,13329,1,0,N,N,N,CP_Units,TT_Task,DT_FixedDUR2,RV_OK,TK_NotStart,CO02HE0110,"02H Lighting JB's, Stands, Tray & Cable",,696.016666666667,0,288,0,0,0,288,0,0,0,,,,2008-02-09 08:01,2008-03-22 08:01,,2007-10-24 08:00,2007-12-04 17:00,2007-10-24 08:00,2007-12-04 17:00,2007-10-24 08:00,2007-12-04 17:00,,2008-02-09 08:01,2008-03-22 08:01,,PT_Normal,,,,,UXyjulM9SjiOrmfywazc+w,k8kBU8AH70mjSueJA0tFhB,,,N,0,0,,,2007-02-01 02:41,2007-02-04 01:00,hbe4678,hbe4678,2007-10-24 08:00,2007-12-04 17:00,288
823,12457004,14517,6815931,13329,1,0,N,N,N,CP_Units,TT_Task,DT_FixedDUR2,RV_OK,TK_NotStart,CO02HE0120,02H Lighting Fixture Installation/Termination,,696.016666666667,576,144,0,0,0,144,0,0,0,,,,2008-03-22 08:01,2008-04-12 08:01,,2007-12-05 08:00,2007-12-31 17:00,2007-12-05 08:00,2007-12-31 17:00,2007-12-05 08:00,2007-12-31 17:00,,2008-03-22 08:01,2008-04-12 08:01,,PT_Normal,,,,,H4qGEiyfSDGTWTg6s3Y16w,NpdgCYQOiU2CMfGChTtCTx,,,N,0,0,,,2007-02-01 02:41,2007-02-04 01:00,hbe4678,hbe4678,2007-12-05 08:00,2007-12-31 17:00,144
824,12457005,14517,6815931,13329,1,0,N,N,N,CP_Units,TT_Task,DT_FixedDUR2,RV_OK,TK_NotStart,CO02HE0130,"02H Power/Control JB's, Tray, Cable, Termination",,120.016666666667,0,872,0,0,0,872,0,0,0,,,,2007-10-27 08:01,2008-03-08 08:01,,2007-09-22 08:00,2008-02-18 17:00,2007-09-22 08:00,2008-02-18 17:00,2007-09-22 08:00,2008-02-18 17:00,,2007-10-27 08:01,2008-03-08 08:01,,PT_Normal,,,,,DonHKti8SFaZeMU+ruq1YQ,hRmd0UEp4kK9dKbEJ/e6Hx,,,N,0,0,,,2007-02-01 02:41,2007-02-04 01:00,hbe4678,hbe4678,2007-09-22 08:00,2008-02-18 17:00,872
825,12457006,14517,6815931,13329,1,0,N,N,N,CP_Units,TT_Task,DT_FixedDUR2,RV_OK,TK_NotStart,CO02CE0110,"02C Lighting JB's, Stands, Tray & Cable",,904.016666666667,0,288,0,0,0,288,0,0,0,,,,2008-02-09 08:01,2008-03-22 08:01,,2007-09-02 08:00,2007-11-04 17:00,2007-09-02 08:00,2007-11-04 17:00,2007-09-02 08:00,2007-11-04 17:00,,2008-02-09 08:01,2008-03-22 08:01,,PT_Normal,,,,,0vfz5OvVT8uGdKxT0imqdA,NtDPdHErGEKyuzojyIv0Th,,,N,0,0,,,2007-02-01 02:41,2007-02-04 01:00,hbe4678,hbe4678,2007-09-02 08:00,2007-11-04 17:00,288
826,12457007,14517,6815931,13329,1,0,N,N,N,CP_Units,TT_Task,DT_FixedDUR2,RV_OK,TK_NotStart,CO02CE0120,02C Lighting Fixture Installation/Termination,,904.016666666667,400,144,0,0,0,144,0,0,0,,,,2008-03-22 08:01,2008-04-12 08:01,,2007-11-05 08:00,2007-11-25 17:00,2007-11-05 08:00,2007-11-25 17:00,2007-11-05 08:00,2007-11-25 17:00,,2008-03-22 08:01,2008-04-12 08:01,,PT_Normal,,,,,YdRcJj+TSxCAxW7w1W+u6A,4iFgl1VPSkOFR674LEHPOx,,,N,0,0,,,2007-02-01 02:41,2007-02-04 01:00,hbe4678,hbe4678,2007-11-05 08:00,2007-11-25 17:00,144
827,12457008,14517,6815931,13329,1,0,N,N,N,CP_Units,TT_Task,DT_FixedDUR2,RV_OK,TK_NotStart,CO02AE0130,"02A Power/Control JB's, Tray, Cable, Termination",,624.016666666667,0,480,0,0,0,480,0,0,0,,,,2008-01-03 08:01,2008-03-13 08:01,,2007-09-06 08:00,2007-12-06 17:00,2007-09-06 08:00,2007-12-06 17:00,2007-09-06 08:00,2007-12-06 17:00,,2008-01-03 08:01,2008-03-13 08:01,,PT_Normal,,,,,Mx1vjS6iRCmNxG6zeIvAfA,pGFlqDKeOEewKwep8qiusB,,,N,0,0,,,2007-02-01 02:41,2007-02-04 01:00,hbe4678,hbe4678,2007-09-06 08:00,2007-12-06 17:00,480
828,12457009,14517,6815931,13329,1,0,N,N,N,CP_Units,TT_Task,DT_FixedDUR2,RV_OK,TK_NotStart,CO02BE0110,"02B Lighting JB's, Stands, Tray & Cable",,1544.01666666667,0,96,0,0,0,96,0,0,0,,,,2008-03-22 08:01,2008-04-05 08:01,,2007-07-12 08:00,2007-07-25 17:00,2007-07-12 08:00,2007-07-25 17:00,2007-07-12 08:00,2007-07-25 17:00,,2008-03-22 08:01,2008-04-05 08:01,,PT_Normal,,,,,35Z+aeuOTLmWWSpOxVJnfg,1EP/9ZmML0mwlQP/a3gJ+R,,,N,0,0,,,2007-02-01 02:41,2007-02-04 01:00,hbe4678,hbe4678,2007-07-12 08:00,2007-07-25 17:00,96
829,12457010,14517,6815931,13329,1,0,N,N,N,CP_Units,TT_Task,DT_FixedDUR2,RV_OK,TK_NotStart,CO02BE0120,02B Lighting Fixture Installation/Termination,,1544.01666666667,944,48,0,0,0,48,0,0,0,,,,2008-04-05 08:01,2008-04-12 08:01,,2007-07-26 08:00,2007-08-01 17:00,2007-07-26 08:00,2007-08-01 17:00,2007-07-26 08:00,2007-08-01 17:00,,2008-04-05 08:01,2008-04-12 08:01,,PT_Normal,,,,,DmG8vNABSLy1vW+SlkdD7w,b8g+8p7mt0+cxvYEicFGeh,,,N,0,0,,,2007-02-01 02:41,2007-02-04 01:00,hbe4678,hbe4678,2007-07-26 08:00,2007-08-01 17:00,48
830,12457011,14517,6815931,13329,1,0,N,N,N,CP_Units,TT_Task,DT_FixedDUR2,RV_OK,TK_NotStart,CO02BE0130,"02B Power/Control JB's, Tray, Cable, Termination",,1088.01666666667,0,56,0,0,0,56,0,0,0,,,,2008-03-25 08:01,2008-04-02 08:01,,2007-09-29 08:00,2007-10-20 17:00,2007-09-29 08:00,2007-10-20 17:00,2007-09-29 08:00,2007-10-20 17:00,,2008-03-25 08:01,2008-04-02 08:01,,PT_Normal,,,,,1nuRz1T5Shq2v50lSGbU5g,76JhKrVMH0CS736Z+hlF1h,,,N,0,0,,,2007-02-01 02:41,2007-02-04 01:00,hbe4678,hbe4678,2007-09-29 08:00,2007-10-20 17:00,56
831,12457012,14517,6815931,13329,1,0,N,N,N,CP_Units,TT_Task,DT_FixedDUR2,RV_OK,TK_NotStart,CO02DE0110,"02D Lighting JB's, Stands, Tray & Cable",,1352.01666666667,0,192,0,0,0,192,0,0,0,,,,2008-03-01 08:01,2008-03-29 08:01,,2007-07-19 08:00,2007-08-15 17:00,2007-07-19 08:00,2007-08-15 17:00,2007-07-19 08:00,2007-08-15 17:00,,2008-03-01 08:01,2008-03-29 08:01,,PT_Normal,,,,,CGsDwCLkRe+T2r/qlk26uA,uXOnGEA3JE+BX6G/RC3Jyh,,,N,0,0,,,2007-02-01 02:41,2007-02-04 01:00,hbe4678,hbe4678,2007-07-19 08:00,2007-08-15 17:00,192
832,12457013,14517,6815931,13329,1,0,N,N,N,CP_Units,TT_Task,DT_FixedDUR2,RV_OK,TK_NotStart,CO02DE0120,02D Lighting Fixture Installation/Termination,,1352.01666666667,784,96,0,0,0,96,0,0,0,,,,2008-03-29 08:01,2008-04-12 08:01,,2007-08-16 08:00,2007-08-29 17:00,2007-08-16 08:00,2007-08-29 17:00,2007-08-16 08:00,2007-08-29 17:00,,2008-03-29 08:01,2008-04-12 08:01,,PT_Normal,,,,,mGJcwFRSTBWHz5EteRrcwA,m1Q2a5RBxkSFIb3p/QcRFx,,,N,0,0,,,2007-02-01 02:41,2007-02-04 01:00,hbe4678,hbe4678,2007-08-16 08:00,2007-08-29 17:00,96
833,12457014,14517,6815931,13329,1,0,N,N,N,CP_Units,TT_Task,DT_FixedDUR2,RV_OK,TK_NotStart,CO02DE0130,"02D Power/Control JB's, Tray, Cable, Termination",,544,0,328,0,0,0,328,0,0,0,,,,2008-02-03 08:00,2008-03-20 17:00,,2007-11-10 08:00,2008-01-01 17:00,2007-11-10 08:00,2008-01-01 17:00,2007-11-10 08:00,2008-01-01 17:00,,2008-02-03 08:00,2008-03-20 17:00,,PT_Normal,,,,,tpJm7kgOSou25oVGvOiRhA,3Qr923sLg0Su71n5VsEcDR,,,N,0,0,,,2007-02-01 02:41,2007-02-01 02:43,hbe4678,hbe4678,2007-11-10 08:00,2008-01-01 17:00,328
834,12457015,14517,6815931,13329,1,0,N,N,N,CP_Units,TT_Task,DT_FixedDUR2,RV_OK,TK_NotStart,CO02EE0110,"02E Lighting JB's, Stands, Tray & Cable",,1400.01666666667,0,192,0,0,0,192,0,0,0,,,,2008-03-01 08:01,2008-03-29 08:01,,2007-07-12 08:00,2007-08-08 17:00,2007-07-12 08:00,2007-08-08 17:00,2007-07-12 08:00,2007-08-08 17:00,,2008-03-01 08:01,2008-03-29 08:01,,PT_Normal,,,,,NiHJsdDtS1GrFOTVjrHK4g,JslI4AN/MUevmFBXJl2ifx,,,N,0,0,,,2007-02-01 02:41,2007-02-04 01:00,hbe4678,hbe4678,2007-07-12 08:00,2007-08-08 17:00,192
835,12457016,14517,6815931,13329,1,0,N,N,N,CP_Units,TT_Task,DT_FixedDUR2,RV_OK,TK_NotStart,CO02EE0120,02E Lighting Fixture Installation/Termination,,1400.01666666667,880,96,0,0,0,96,0,0,0,,,,2008-03-29 08:01,2008-04-12 08:01,,2007-08-09 08:00,2007-08-22 17:00,2007-08-09 08:00,2007-08-22 17:00,2007-08-09 08:00,2007-08-22 17:00,,2008-03-29 08:01,2008-04-12 08:01,,PT_Normal,,,,,IpE2nighRVWyTVTyVdOpFg,htRBIJ7nJEC+UJwDd3JgSx,,,N,0,0,,,2007-02-01 02:41,2007-02-04 01:00,hbe4678,hbe4678,2007-08-09 08:00,2007-08-22 17:00,96
836,12457017,14517,6815931,13329,1,0,N,N,N,CP_Units,TT_Task,DT_FixedDUR2,RV_OK,TK_NotStart,CO02EE0130,"02E Power/Control JB's, Tray, Cable, Termination",,536.016666666667,0,448,0,0,0,448,0,0,0,,,,2008-01-09 08:01,2008-03-15 08:01,,2007-10-08 08:00,2007-12-26 17:00,2007-10-08 08:00,2007-12-26 17:00,2007-10-08 08:00,2007-12-26 17:00,,2008-01-09 08:01,2008-03-15 08:01,,PT_Normal,,,,,piULQ+7hTNaMNdlsi94IeQ,WKQ+nF97b02cB+TZwdI4Xx,,,N,0,0,,,2007-02-01 02:41,2007-02-04 01:00,hbe4678,hbe4678,2007-10-08 08:00,2007-12-26 17:00,448
837,12457018,14517,6815931,13329,1,0,N,N,N,CP_Units,TT_Task,DT_FixedDUR2,RV_OK,TK_NotStart,CO02FE0110,"02F Lighting JB's, Stands, Tray & Cable",,1400.01666666667,0,192,0,0,0,192,0,0,0,,,,2008-03-01 08:01,2008-03-29 08:01,,2007-07-12 08:00,2007-08-08 17:00,2007-07-12 08:00,2007-08-08 17:00,2007-07-12 08:00,2007-08-08 17:00,,2008-03-01 08:01,2008-03-29 08:01,,PT_Normal,,,,,XaMcSC1OSPiOpXxAElb2nw,/eRG5hxlG0Gkp+ZFw1q0eh,,,N,0,0,,,2007-02-01 02:41,2007-02-04 01:00,hbe4678,hbe4678,2007-07-12 08:00,2007-08-08 17:00,192
838,12457019,14517,6815931,13329,1,0,N,N,N,CP_Units,TT_Task,DT_FixedDUR2,RV_OK,TK_NotStart,CO02FE0120,02F Lighting Fixture Installation/Termination,,1400.01666666667,920,96,0,0,0,96,0,0,0,,,,2008-03-29 08:01,2008-04-12 08:01,,2007-08-09 08:00,2007-08-22 17:00,2007-08-09 08:00,2007-08-22 17:00,2007-08-09 08:00,2007-08-22 17:00,,2008-03-29 08:01,2008-04-12 08:01,,PT_Normal,,,,,grhxr4PvS9m0vyKTpRxDhA,sqRH5nKU+E69EMKZ9ONCCB,,,N,0,0,,,2007-02-01 02:41,2007-02-04 01:00,hbe4678,hbe4678,2007-08-09 08:00,2007-08-22 17:00,96
839,12457020,14517,6815931,13329,1,0,N,N,N,CP_Units,TT_Task,DT_FixedDUR2,RV_OK,TK_NotStart,CO02FE0130,"02F Power/Control JB's, Tray, Cable, Termination",,832.016666666667,0,408,0,0,0,408,0,0,0,,,,2008-01-17 08:01,2008-03-17 08:01,,2007-08-21 08:00,2007-11-10 17:00,2007-08-21 08:00,2007-11-10 17:00,2007-08-21 08:00,2007-11-10 17:00,,2008-01-17 08:01,2008-03-17 08:01,,PT_Normal,,,,,tvVlt0u2SJ2ZuGDGFGWo/Q,Sio5qz25L0edTSF5Fq/hAx,,,N,0,0,,,2007-02-01 02:41,2007-02-04 01:00,hbe4678,hbe4678,2007-08-21 08:00,2007-11-10 17:00,408
840,12457021,14517,6815931,13329,1,0,N,N,N,CP_Units,TT_Task,DT_FixedDUR2,RV_OK,TK_NotStart,CO02GE0110,"02G Lighting JB's, Stands, Tray & Cable",,1192.01666666667,0,288,0,0,0,288,0,0,0,,,,2008-02-23 08:01,2008-04-05 08:01,,2007-08-05 08:00,2007-09-17 17:00,2007-08-05 08:00,2007-09-17 17:00,2007-08-05 08:00,2007-09-17 17:00,,2008-02-23 08:01,2008-04-05 08:01,,PT_Normal,,,,,hOpbh+2BRmGQpbydeBef6A,nMde446dD0S+LYzhrceX/h,,,N,0,0,,,2007-02-01 02:41,2007-02-04 01:05,hbe4678,hbe4678,2007-08-05 08:00,2007-09-17 17:00,288
841,12457022,14517,6815931,13329,1,0,N,N,N,CP_Units,TT_Task,DT_FixedDUR2,RV_OK,TK_NotStart,CO02GE0120,02G Lighting Fixture Installation/Termination,,1192.01666666667,600,144,0,0,0,144,0,0,0,,,,2008-03-22 08:01,2008-04-12 08:01,,2007-09-02 08:00,2007-10-01 17:00,2007-09-02 08:00,2007-10-01 17:00,2007-09-02 08:00,2007-10-01 17:00,,2008-03-22 08:01,2008-04-12 08:01,,PT_Normal,,,,,/5cQhHH9QeCydUC40NRDbA,/SY+/QZKCkyNbiq7ZBiVNB,,,N,0,0,,,2007-02-01 02:41,2007-02-04 01:05,hbe4678,hbe4678,2007-09-02 08:00,2007-10-01 17:00,144
842,12457023,14517,6815931,13329,1,0,N,N,N,CP_Units,TT_Task,DT_FixedDUR2,RV_OK,TK_NotStart,CO02GE0130,"02G Power/Control JB's, Tray, Cable, Termination",,864,0,736,0,0,0,736,0,0,0,,,,2007-11-20 08:01,2008-03-12 08:01,,2007-06-25 08:01,2007-11-01 08:01,2007-06-25 08:01,2007-11-01 08:01,2007-06-25 08:01,2007-11-01 08:01,,2007-11-20 08:01,2008-03-12 08:01,,PT_Normal,,,,,aYJ384y+R8+/cWH2YunoDA,M2NEYdnRk0eWkeeOKKRNzh,,,N,0,0,,,2007-02-01 02:41,2007-02-04 01:05,hbe4678,hbe4678,2007-06-25 08:01,2007-11-01 08:01,736
843,12457024,14517,6815931,13329,1,0,N,N,N,CP_Units,TT_Task,DT_FixedDUR2,RV_OK,TK_NotStart,CO02JE0110,"02J Lighting JB's, Stands, Tray & Cable",,1256.01666666667,0,288,0,0,0,288,0,0,0,,,,2008-02-09 08:01,2008-03-22 08:01,,2007-07-12 08:00,2007-08-22 17:00,2007-07-12 08:00,2007-08-22 17:00,2007-07-12 08:00,2007-08-22 17:00,,2008-02-09 08:01,2008-03-22 08:01,,PT_Normal,,,,,SO2HEWNiRl6Ry8xNNUE1+w,XVCKGFWl8EexFKtl5UOmBx,,,N,0,0,,,2007-02-01 02:41,2007-02-04 01:00,hbe4678,hbe4678,2007-07-12 08:00,2007-08-22 17:00,288
844,12457025,14517,6815931,13329,1,0,N,N,N,CP_Units,TT_Task,DT_FixedDUR2,RV_OK,TK_NotStart,CO02JE0120,02J Lighting Fixture Installation/Termination,,1256.01666666667,744,144,0,0,0,144,0,0,0,,,,2008-03-22 08:01,2008-04-12 08:01,,2007-08-23 08:00,2007-09-12 17:00,2007-08-23 08:00,2007-09-12 17:00,2007-08-23 08:00,2007-09-12 17:00,,2008-03-22 08:01,2008-04-12 08:01,,PT_Normal,,,,,2ynvA2B0SSeVkceX08Tiww,NwPO9TRrzESJehStsk1Q6R,,,N,0,0,,,2007-02-01 02:41,2007-02-04 01:00,hbe4678,hbe4678,2007-08-23 08:00,2007-09-12 17:00,144
845,12457026,14517,6815931,13329,1,0,N,N,N,CP_Units,TT_Task,DT_FixedDUR2,RV_OK,TK_NotStart,CO02JE0130,"02J Power/Control JB's, Tray, Cable, Termination",,784.016666666667,0,544,0,0,0,544,0,0,0,,,,2007-12-16 08:01,2008-03-10 08:01,,2007-08-01 08:00,2007-11-10 17:00,2007-08-01 08:00,2007-11-10 17:00,2007-08-01 08:00,2007-11-10 17:00,,2007-12-16 08:01,2008-03-10 08:01,,PT_Normal,,,,,jctrWwbLT5KU4JS8p9aLtg,RauxSsSBxEqOncepoWKKVx,,,N,0,0,,,2007-02-01 02:41,2007-02-04 01:00,hbe4678,hbe4678,2007-08-01 08:00,2007-11-10 17:00,544
846,12457027,14517,6815931,13329,1,0,N,N,N,CP_Units,TT_Task,DT_FixedDUR2,RV_OK,TK_NotStart,CO02KE0110,"02K Lighting JB's, Stands, Tray & Cable",,1152,0,288,0,0,0,288,0,0,0,,,,2008-02-09 08:01,2008-03-22 08:01,,2007-07-28 08:01,2007-09-08 08:01,2007-07-28 08:01,2007-09-08 08:01,2007-07-28 08:01,2007-09-08 08:01,,2008-02-09 08:01,2008-03-22 08:01,,PT_Normal,,,,,AM4hvYtuSYe3nIHqsN7wQA,eJJRDPGc10iNY8tFMd60cR,,,N,0,0,,,2007-02-01 02:41,2007-02-01 02:43,hbe4678,hbe4678,2007-07-28 08:01,2007-09-08 08:01,288
847,12457028,14517,6815931,13329,1,0,N,N,N,CP_Units,TT_Task,DT_FixedDUR2,RV_OK,TK_NotStart,CO02LE0110,"02L Lighting JB's, Stands, Tray & Cable",,1304.01666666667,0,288,0,0,0,288,0,0,0,,,,2008-02-09 08:01,2008-03-22 08:01,,2007-07-05 08:00,2007-08-15 17:00,2007-07-05 08:00,2007-08-15 17:00,2007-07-05 08:00,2007-08-15 17:00,,2008-02-09 08:01,2008-03-22 08:01,,PT_Normal,,,,,EzoOT5LWStG8/t6peeSurQ,,,,N,0,0,,,2007-02-01 02:41,2007-02-04 01:00,hbe4678,hbe4678,2007-07-05 08:00,2007-08-15 17:00,288
848,12457029,14517,6815931,13329,1,0,N,N,N,CP_Units,TT_Task,DT_FixedDUR2,RV_OK,TK_NotStart,CO02LE0120,02L Lighting Fixture Installation/Termination,,1304.01666666667,1168,144,0,0,0,144,0,0,0,,,,2008-03-22 08:01,2008-04-12 08:01,,2007-08-16 08:00,2007-09-05 17:00,2007-08-16 08:00,2007-09-05 17:00,2007-08-16 08:00,2007-09-05 17:00,,2008-03-22 08:01,2008-04-12 08:01,,PT_Normal,,,,,+TTzQQ8sR9+v/lHk07KoBA,,,,N,0,0,,,2007-02-01 02:41,2007-02-04 01:00,hbe4678,hbe4678,2007-08-16 08:00,2007-09-05 17:00,144
849,12457030,14517,6815931,13329,1,0,N,N,N,CP_Units,TT_Task,DT_FixedDUR2,RV_OK,TK_NotStart,CO02LE0130,"02L Power/Control JB's, Tray, Cable, Termination",,-95.9833333333333,0,1096,0,0,0,1096,0,0,0,,,,2007-08-27 08:01,2008-03-02 08:01,,2007-09-10 08:00,2008-03-15 17:00,2007-09-10 08:00,2008-03-15 17:00,2007-09-10 08:00,2008-03-15 17:00,,2007-08-27 08:01,2008-03-02 08:01,,PT_Normal,,,,,jB1LHwYMRLCAWSTSCIgr1Q,,,,N,0,0,,,2007-02-01 02:41,2007-02-04 01:00,hbe4678,hbe4678,2007-09-10 08:00,2008-03-15 17:00,1096
850,12457031,14517,6815931,13329,1,0,N,N,N,CP_Units,TT_WBS,DT_FixedDUR2,RV_OK,TK_NotStart,WO020E0100,020 Above Ground Electrical,1343,184.016666666667,2712,1623.98333333333,0,221336.81,221336.81,1623.98333333333,0,0,0,,,,2007-07-09 08:00,2008-04-12 08:01,,2007-06-25 08:01,2008-03-15 17:00,2007-06-25 08:01,2008-03-15 17:00,2007-06-25 08:01,2008-03-15 17:00,,2007-07-09 08:00,2008-04-12 08:01,,PT_Normal,,,,,O1dfbtaETn2sCHhGq03q8A,Ikx1UZfkiUmADlU9JTqGbx,,,N,0,0,,,2007-02-01 02:41,2007-02-04 01:05,hbe4678,hbe4678,2007-06-25 08:01,2008-03-15 17:00,1623.98333333333
851,12457032,14517,6815931,13329,1,0,N,N,N,CP_Units,TT_Task,DT_FixedDUR2,RV_OK,TK_NotStart,CO02AE0110,"02A Lighting JB's, Stands, Tray & Cable",,1256.01666666667,0,192,0,0,0,192,0,0,0,,,,2008-03-01 08:01,2008-03-29 08:01,,2007-08-02 08:00,2007-08-29 17:00,2007-08-02 08:00,2007-08-29 17:00,2007-08-02 08:00,2007-08-29 17:00,,2008-03-01 08:01,2008-03-29 08:01,,PT_Normal,,,,,pOBuH4haTHG8u2cOuKFroQ,NtDPdHErGEKyuzojyIv0Th,,,N,0,0,,,2007-02-01 02:41,2007-02-04 01:00,hbe4678,hbe4678,2007-08-02 08:00,2007-08-29 17:00,192
852,12457033,14517,6815931,13329,1,0,N,N,N,CP_Units,TT_Task,DT_FixedDUR2,RV_OK,TK_NotStart,CO02AE0120,02A Lighting Fixture Installation/Termination,,1256.01666666667,688,96,0,0,0,96,0,0,0,,,,2008-03-29 08:01,2008-04-12 08:01,,2007-08-30 08:00,2007-09-12 17:00,2007-08-30 08:00,2007-09-12 17:00,2007-08-30 08:00,2007-09-12 17:00,,2008-03-29 08:01,2008-04-12 08:01,,PT_Normal,,,,,JX+9zVHVQ+edSw1HW7/mjQ,4iFgl1VPSkOFR674LEHPOx,,,N,0,0,,,2007-02-01 02:41,2007-02-04 01:00,hbe4678,hbe4678,2007-08-30 08:00,2007-09-12 17:00,96
853,12457034,14517,6815932,13329,1,0,N,N,N,CP_Units,TT_Task,DT_FixedDUR2,RV_OK,TK_NotStart,CO02CI0130,02C Install In Line Instruments,,664.016666666667,336,88,0,0,0,88,0,0,0,,,,2008-03-04 08:01,2008-03-17 08:01,,2007-11-22 08:00,2007-12-04 17:00,2007-11-22 08:00,2007-12-04 17:00,2007-11-22 08:00,2007-12-04 17:00,,2008-03-04 08:01,2008-03-17 08:01,,PT_Normal,,,,,tCizySiBT9iIF/fn6kPoLA,0/QxArDDXkKkHeTbjEmocR,,,N,0,0,,,2007-02-01 02:41,2007-02-04 01:00,hbe4678,hbe4678,2007-11-22 08:00,2007-12-04 17:00,88
854,12457035,14517,6815932,13329,1,0,N,N,N,CP_Units,TT_Task,DT_FixedDUR2,RV_OK,TK_NotStart,CO02CI0140,02C Continuity Testing,,328.016666666667,0,88,0,0,0,88,0,0,0,,,,2008-03-04 08:01,2008-03-17 08:01,,2008-01-16 08:00,2008-01-28 17:00,2008-01-16 08:00,2008-01-28 17:00,2008-01-16 08:00,2008-01-28 17:00,,2008-03-04 08:01,2008-03-17 08:01,,PT_Normal,,,,,MVkMAUJASY+ssCyHKH5zhg,EpcF/IGl+kSxdrZwRB4CLx,,,N,0,0,,,2007-02-01 02:41,2007-02-04 01:00,hbe4678,hbe4678,2008-01-16 08:00,2008-01-28 17:00,88
855,12457036,14517,6815945,13332,1,0,N,N,N,CP_Units,TT_Task,DT_FixedDUR2,RV_OK,TK_NotStart,SC02CI0150,02C Function Testing,,384.016666666667,0,312,0,0,0,312,0,0,0,,,,2008-03-04 08:01,2008-04-12 08:01,,2008-01-16 08:00,2008-02-23 17:00,2008-01-16 08:00,2008-02-23 17:00,2008-01-16 08:00,2008-02-23 17:00,,2008-03-04 08:01,2008-04-12 08:01,,PT_Normal,,,,,BsmLoMbaQ7GryRq3deghpg,X5aaRVjF6kO1+j4OOyIiVR,,,N,0,0,,,2007-02-01 02:41,2007-02-04 01:00,hbe4678,hbe4678,2008-01-16 08:00,2008-02-23 17:00,312
856,12457037,14517,6815932,13329,1,0,N,N,N,CP_Units,TT_Task,DT_FixedDUR2,RV_OK,TK_NotStart,CO02HI0145,02H Contingency (101-B),,120.016666666667,0,192,0,0,0,192,0,0,0,,,,2008-03-15 08:01,2008-04-12 08:01,,2008-02-26 08:00,2008-03-24 17:00,2008-02-26 08:00,2008-03-24 17:00,2008-02-26 08:00,2008-03-24 17:00,,2008-03-15 08:01,2008-04-12 08:01,,PT_Normal,,,,,EoF5Br0LSeWlgJLnDJ3zuw,D9x6NVai5US9nfZY00BZux,,,N,0,0,,,2007-02-01 02:41,2007-02-04 01:00,hbe4678,hbe4678,2008-02-26 08:00,2008-03-24 17:00,192
857,12457038,14517,6815932,13329,1,0,N,N,N,CP_Units,TT_Task,DT_FixedDUR2,RV_OK,TK_NotStart,CO02NI0120,"02N Instrument JB's, Field Instr, Tray, Cable",,640.016666666667,104,72,0,0,0,72,0,0,0,,,,2008-03-23 08:01,2008-04-02 08:01,,2007-12-15 08:00,2007-12-30 17:00,2007-12-15 08:00,2007-12-30 17:00,2007-12-15 08:00,2007-12-30 17:00,,2008-03-23 08:01,2008-04-02 08:01,,PT_Normal,,,,,gnW8yJPvQzugowzf/1G0HQ,6aZjaJBo40uCMv6BpURerh,,,N,0,0,,,2007-02-01 02:41,2007-02-04 01:00,hbe4678,hbe4678,2007-12-15 08:00,2007-12-30 17:00,72
858,12457039,14517,6815932,13329,1,0,N,N,N,CP_Units,TT_Task,DT_FixedDUR2,RV_OK,TK_NotStart,CO02NI0130,02N Install In Line Instruments,,600.016666666667,72,8,0,0,0,8,0,0,0,,,,2008-03-27 08:01,2008-03-29 08:01,,2007-12-31 08:00,2007-12-31 17:00,2007-12-31 08:00,2007-12-31 17:00,2007-12-31 08:00,2007-12-31 17:00,,2008-03-27 08:01,2008-03-29 08:01,,PT_Normal,,,,,c80hzWKESgmqXLxq3VTyFA,Ynf9Wmxhd0+EoSawLTOTlh,,,N,0,0,,,2007-02-01 02:41,2007-02-04 01:00,hbe4678,hbe4678,2007-12-31 08:00,2007-12-31 17:00,8
859,12457040,14517,6815932,13329,1,0,N,N,N,CP_Units,TT_Task,DT_FixedDUR2,RV_OK,TK_NotStart,CO02NI0140,02N Continuity Testing,,536.016666666667,0,8,0,0,0,8,0,0,0,,,,2008-04-08 08:01,2008-04-09 08:01,,2008-01-21 08:00,2008-01-21 17:00,2008-01-21 08:00,2008-01-21 17:00,2008-01-21 08:00,2008-01-21 17:00,,2008-04-08 08:01,2008-04-09 08:01,,PT_Normal,,,,,eYGNCI1UQlaryFjsV+8+1A,YCjEDOwsPUGNFqPn15qGmh,,,N,0,0,,,2007-02-01 02:41,2007-02-04 01:00,hbe4678,hbe4678,2008-01-21 08:00,2008-01-21 17:00,8
860,12457041,14517,6815945,13332,1,0,N,N,N,CP_Units,TT_Task,DT_FixedDUR2,RV_OK,TK_NotStart,SC02NI0150,02N Function Testing,,624.016666666667,96,24,0,0,0,24,0,0,0,,,,2008-04-09 08:01,2008-04-12 08:01,,2008-01-22 08:00,2008-01-24 17:00,2008-01-22 08:00,2008-01-24 17:00,2008-01-22 08:00,2008-01-24 17:00,,2008-04-09 08:01,2008-04-12 08:01,,PT_Normal,,,,,PjTA+EPfQyyOxzX7vJdNWw,YLU+AwYvQEeEJT+EIfZQTR,,,N,0,0,,,2007-02-01 02:41,2007-02-04 01:00,hbe4678,hbe4678,2008-01-22 08:00,2008-01-24 17:00,24
861,12457042,14517,6815932,13329,1,0,N,N,N,CP_Units,TT_Task,DT_FixedDUR2,RV_OK,TK_NotStart,CO02PI0120,"02P Instrument JB's, Field Instr, Tray, Cable",,968.016666666667,456,104,0,0,0,104,0,0,0,,,,2008-03-16 08:01,2008-03-31 08:01,,2007-10-21 08:00,2007-11-04 17:00,2007-10-21 08:00,2007-11-04 17:00,2007-10-21 08:00,2007-11-04 17:00,,2008-03-16 08:01,2008-03-31 08:01,,PT_Normal,,,,,7GBw1qJgTgW7ky8OF2Wbvw,PUQ0irYAnE6dlczahGMUOh,,,N,0,0,,,2007-02-01 02:41,2007-02-04 01:00,hbe4678,hbe4678,2007-10-21 08:00,2007-11-04 17:00,104
862,12457043,14517,6815932,13329,1,0,N,N,N,CP_Units,TT_Task,DT_FixedDUR2,RV_OK,TK_NotStart,CO02PI0130,02P Install In Line Instruments,,944.016666666667,432,8,0,0,0,8,0,0,0,,,,2008-03-27 08:01,2008-03-29 08:01,,2007-11-05 08:00,2007-11-05 17:00,2007-11-05 08:00,2007-11-05 17:00,2007-11-05 08:00,2007-11-05 17:00,,2008-03-27 08:01,2008-03-29 08:01,,PT_Normal,,,,,YUKXGwZJTF+CB/HLZmvOyg,7I0OafAxh0W9ACMfklax+x,,,N,0,0,,,2007-02-01 02:41,2007-02-04 01:00,hbe4678,hbe4678,2007-11-05 08:00,2007-11-05 17:00,8
863,12457044,14517,6815932,13329,1,0,N,N,N,CP_Units,TT_Task,DT_FixedDUR2,RV_OK,TK_NotStart,CO02PI0140,02P Continuity Testing,,512.016666666667,0,8,0,0,0,8,0,0,0,,,,2008-04-06 08:01,2008-04-07 08:01,,2008-01-22 08:00,2008-01-22 17:00,2008-01-22 08:00,2008-01-22 17:00,2008-01-22 08:00,2008-01-22 17:00,,2008-04-06 08:01,2008-04-07 08:01,,PT_Normal,,,,,X4GRV0c5TrmSaOzn5TFKpA,eVOCMPbZhUyq88SFKO1Z+B,,,N,0,0,,,2007-02-01 02:41,2007-02-04 01:00,hbe4678,hbe4678,2008-01-22 08:00,2008-01-22 17:00,8
864,12457045,14517,6815945,13332,1,0,N,N,N,CP_Units,TT_Task,DT_FixedDUR2,RV_OK,TK_NotStart,SC02PI0150,02P Function Testing,,600.016666666667,0,40,0,0,0,40,0,0,0,,,,2008-04-07 08:01,2008-04-12 08:01,,2008-01-23 08:00,2008-01-27 17:00,2008-01-23 08:00,2008-01-27 17:00,2008-01-23 08:00,2008-01-27 17:00,,2008-04-07 08:01,2008-04-12 08:01,,PT_Normal,,,,,C8vB7ni3RTK6TnW5tIcWow,IuQUAgLn00mLO0397eD1oR,,,N,0,0,,,2007-02-01 02:41,2007-02-04 01:00,hbe4678,hbe4678,2008-01-23 08:00,2008-01-27 17:00,40
865,12457046,14517,6815932,13329,1,0,N,N,N,CP_Units,TT_Task,DT_FixedDUR2,RV_OK,TK_NotStart,CO02QI0120,"02Q Instrument JB's, Field Instr, Tray, Cable",,920.016666666667,416,104,0,0,0,104,0,0,0,,,,2008-03-16 08:01,2008-03-31 08:01,,2007-10-28 08:00,2007-11-11 17:00,2007-10-28 08:00,2007-11-11 17:00,2007-10-28 08:00,2007-11-11 17:00,,2008-03-16 08:01,2008-03-31 08:01,,PT_Normal,,,,,zC2l0eF7R5an93Y2KDXteA,b1dsBRr62kSAybpl9McX3x,,,N,0,0,,,2007-02-01 02:41,2007-02-04 01:00,hbe4678,hbe4678,2007-10-28 08:00,2007-11-11 17:00,104
866,12457047,14517,6815932,13329,1,0,N,N,N,CP_Units,TT_Task,DT_FixedDUR2,RV_OK,TK_NotStart,CO02QI0130,02Q Install In Line Instruments,,896.016666666667,392,8,0,0,0,8,0,0,0,,,,2008-03-27 08:01,2008-03-29 08:01,,2007-11-12 08:00,2007-11-12 17:00,2007-11-12 08:00,2007-11-12 17:00,2007-11-12 08:00,2007-11-12 17:00,,2008-03-27 08:01,2008-03-29 08:01,,PT_Normal,,,,,ivXAyjQiQr2LbpXs8A9Hsg,XN9CMhZbEEqVkqWLgMFBsh,,,N,0,0,,,2007-02-01 02:41,2007-02-04 01:00,hbe4678,hbe4678,2007-11-12 08:00,2007-11-12 17:00,8
867,12457048,14517,6815932,13329,1,0,N,N,N,CP_Units,TT_Task,DT_FixedDUR2,RV_OK,TK_NotStart,CO02QI0140,02Q Continuity Testing,,504.016666666667,0,8,0,0,0,8,0,0,0,,,,2008-04-06 08:01,2008-04-07 08:01,,2008-01-23 08:00,2008-01-23 17:00,2008-01-23 08:00,2008-01-23 17:00,2008-01-23 08:00,2008-01-23 17:00,,2008-04-06 08:01,2008-04-07 08:01,,PT_Normal,,,,,gqLoTimPQQq/ARLEOqSgfg,oNwbQ3LYuUm4R8XpEfcDSh,,,N,0,0,,,2007-02-01 02:41,2007-02-04 01:00,hbe4678,hbe4678,2008-01-23 08:00,2008-01-23 17:00,8
868,12457049,14517,6815945,13332,1,0,N,N,N,CP_Units,TT_Task,DT_FixedDUR2,RV_OK,TK_NotStart,SC02QI0150,02Q Function Testing,,592.016666666667,0,40,0,0,0,40,0,0,0,,,,2008-04-07 08:01,2008-04-12 08:01,,2008-01-24 08:00,2008-01-28 17:00,2008-01-24 08:00,2008-01-28 17:00,2008-01-24 08:00,2008-01-28 17:00,,2008-04-07 08:01,2008-04-12 08:01,,PT_Normal,,,,,F2PmYUm/QR28GIgwoCnWLA,ICtFH3iV0E+CHBasCqaDbR,,,N,0,0,,,2007-02-01 02:41,2007-02-04 01:00,hbe4678,hbe4678,2008-01-24 08:00,2008-01-28 17:00,40
869,12457050,14517,6815932,13329,1,0,N,N,N,CP_Units,TT_Task,DT_FixedDUR2,RV_OK,TK_NotStart,CO02YI0120,"02Y Instrument JB's, Field Instr, Tray, Cable",,-280,0,672,0,0,0,672,0,0,0,,,,2007-07-09 08:00,2007-11-05 17:00,,2007-08-19 08:00,2007-12-16 17:00,2007-08-19 08:00,2007-12-16 17:00,2007-08-19 08:00,2007-12-16 17:00,,2007-07-09 08:00,2007-11-05 17:00,,PT_Normal,,,,,H+iNr0+NRZyh4O4SZ+fsRw,59LFzGgKpkGix2A/HSFVyx,,,N,0,0,,,2007-02-01 02:41,2007-02-01 02:43,hbe4678,hbe4678,2007-08-19 08:00,2007-12-16 17:00,672
870,12457051,14517,6815932,13329,1,0,N,N,N,CP_Units,TT_Task,DT_FixedDUR2,RV_OK,TK_NotStart,CO02YI0130,02Y Install In Line Instruments,,520.016666666667,96,192,0,0,0,192,0,0,0,,,,2008-03-01 08:01,2008-03-29 08:01,,2007-12-10 08:00,2008-01-12 17:00,2007-12-10 08:00,2008-01-12 17:00,2007-12-10 08:00,2008-01-12 17:00,,2008-03-01 08:01,2008-03-29 08:01,,PT_Normal,,,,,wofpNzSdTgmLSmCGIypP1g,zb+NrqguG0GMpwoIu2QM1B,,,N,0,0,,,2007-02-01 02:41,2007-02-04 01:00,hbe4678,hbe4678,2007-12-10 08:00,2008-01-12 17:00,192
871,12457052,14517,6815932,13329,1,0,N,N,N,CP_Units,TT_Task,DT_FixedDUR2,RV_OK,TK_NotStart,CO02YI0140,02Y Continuity Testing,,424.016666666667,0,192,0,0,0,192,0,0,0,,,,2008-03-08 08:01,2008-04-05 08:01,,2008-01-06 08:00,2008-02-02 17:00,2008-01-06 08:00,2008-02-02 17:00,2008-01-06 08:00,2008-02-02 17:00,,2008-03-08 08:01,2008-04-05 08:01,,PT_Normal,,,,,WA60aY3/SqS8jQNjqqtWgw,GMV8q+Scxky6Z7xEBtha5R,,,N,0,0,,,2007-02-01 02:41,2007-02-04 01:00,hbe4678,hbe4678,2008-01-06 08:00,2008-02-02 17:00,192
872,12457053,14517,6815945,13332,1,0,N,N,N,CP_Units,TT_Task,DT_FixedDUR2,RV_OK,TK_NotStart,SC02YI0150,02Y Function Testing,,496.016666666667,0,192,0,0,0,192,0,0,0,,,,2008-03-19 08:01,2008-04-12 08:01,,2008-01-17 08:00,2008-02-09 17:00,2008-01-17 08:00,2008-02-09 17:00,2008-01-17 08:00,2008-02-09 17:00,,2008-03-19 08:01,2008-04-12 08:01,,PT_Normal,,,,,O4FTwwGMQDqPRfCd07KQtA,Rc4fwsfgMkKFVZXUDJj7ih,,,N,0,0,,,2007-02-01 02:41,2007-02-04 01:00,hbe4678,hbe4678,2008-01-17 08:00,2008-02-09 17:00,192
873,12457054,14517,6815932,13329,1,0,N,N,N,CP_Units,TT_Task,DT_FixedDUR2,RV_OK,TK_NotStart,CO02HI0120,"02H Instrument JB's, Field Instr, Tray, Cable",,120.016666666667,0,872,0,0,0,872,0,0,0,,,,2007-10-27 08:01,2008-03-08 08:01,,2007-09-22 08:00,2008-02-18 17:00,2007-09-22 08:00,2008-02-18 17:00,2007-09-22 08:00,2008-02-18 17:00,,2007-10-27 08:01,2008-03-08 08:01,,PT_Normal,,,,,kyAL0EkpSTSOJuQ/9xIbdA,54lpfYd+VUeyxbCO0VQg4R,,,N,0,0,,,2007-02-01 02:41,2007-02-04 01:00,hbe4678,hbe4678,2007-09-22 08:00,2008-02-18 17:00,872
874,12457055,14517,6815932,13329,1,0,N,N,N,CP_Units,TT_Task,DT_FixedDUR2,RV_OK,TK_NotStart,CO02HI0130,02H Install In Line Instruments,,80.0166666666667,0,88,0,0,0,88,0,0,0,,,,2008-03-02 08:01,2008-03-15 08:01,,2008-02-19 08:00,2008-03-02 17:00,2008-02-19 08:00,2008-03-02 17:00,2008-02-19 08:00,2008-03-02 17:00,,2008-03-02 08:01,2008-03-15 08:01,,PT_Normal,,,,,xpUNseJaR6WxRTDOzkGiSA,qScgPS+sRkSoC5Q3yn37aR,,,N,0,0,,,2007-02-01 02:41,2007-02-04 01:00,hbe4678,hbe4678,2008-02-19 08:00,2008-03-02 17:00,88
875,12457056,14517,6815932,13329,1,0,N,N,N,CP_Units,TT_Task,DT_FixedDUR2,RV_OK,TK_NotStart,CO02HI0140,02H Continuity Testing,,120.016666666667,0,88,0,0,0,88,0,0,0,,,,2008-03-02 08:01,2008-03-15 08:01,,2008-02-13 08:00,2008-02-25 17:00,2008-02-13 08:00,2008-02-25 17:00,2008-02-13 08:00,2008-02-25 17:00,,2008-03-02 08:01,2008-03-15 08:01,,PT_Normal,,,,,nmpIfKrNTwGO4idIz+A1CQ,3gB5FJzD5ku3Zt+Xa1ANIB,,,N,0,0,,,2007-02-01 02:41,2007-02-04 01:00,hbe4678,hbe4678,2008-02-13 08:00,2008-02-25 17:00,88
876,12457057,14517,6815945,13332,1,0,N,N,N,CP_Units,TT_Task,DT_FixedDUR2,RV_OK,TK_NotStart,SC02HI0150,02H Function Testing,,96.0166666666667,0,328,0,0,0,328,0,0,0,,,,2008-03-02 08:01,2008-04-12 08:01,,2008-02-19 08:00,2008-03-30 17:00,2008-02-19 08:00,2008-03-30 17:00,2008-02-19 08:00,2008-03-30 17:00,,2008-03-02 08:01,2008-04-12 08:01,,PT_Normal,,,,,1LBkn+9mTMa3EcPQ8LNHVw,SOMPUKrVNEqWpcPGp4DZRh,,,N,0,0,,,2007-02-01 02:41,2007-02-04 01:00,hbe4678,hbe4678,2008-02-19 08:00,2008-03-30 17:00,328
877,12457058,14517,6815932,13329,1,0,N,N,N,CP_Units,TT_Task,DT_FixedDUR2,RV_OK,TK_NotStart,CO02CI0120,"02C Instrument JB's, Field Instr, Tray, Cable",,704.016666666667,376,840,0,0,0,840,0,0,0,,,,2007-11-03 08:01,2008-03-10 08:01,,2007-07-01 08:00,2007-11-21 17:00,2007-07-01 08:00,2007-11-21 17:00,2007-07-01 08:00,2007-11-21 17:00,,2007-11-03 08:01,2008-03-10 08:01,,PT_Normal,,,,,7YSPf3dfQquZwyl32mFIoA,5UDCqAhUBEq3uMQsh5Uyqx,,,N,0,0,,,2007-02-01 02:41,2007-02-04 01:00,hbe4678,hbe4678,2007-07-01 08:00,2007-11-21 17:00,840
878,12457059,14517,6815945,13332,1,0,N,N,N,CP_Units,TT_Task,DT_FixedDUR2,RV_OK,TK_NotStart,SC02EI0150,02E Function Testing,,440.016666666667,0,168,0,0,0,168,0,0,0,,,,2008-03-22 08:01,2008-04-12 08:01,,2008-01-27 08:00,2008-02-16 17:00,2008-01-27 08:00,2008-02-16 17:00,2008-01-27 08:00,2008-02-16 17:00,,2008-03-22 08:01,2008-04-12 08:01,,PT_Normal,,,,,c1X4CXiHR0iW/ucRfmOvtw,FGzYOBg2rEadvEv2I+0xtB,,,N,0,0,,,2007-02-01 02:41,2007-02-04 01:00,hbe4678,hbe4678,2008-01-27 08:00,2008-02-16 17:00,168
879,12457060,14517,6815932,13329,1,0,N,N,N,CP_Units,TT_Task,DT_FixedDUR2,RV_OK,TK_NotStart,CO02FI0120,"02F Instrument JB's, Field Instr, Tray, Cable",,832.016666666667,480,408,0,0,0,408,0,0,0,,,,2008-01-17 08:01,2008-03-17 08:01,,2007-08-21 08:00,2007-11-10 17:00,2007-08-21 08:00,2007-11-10 17:00,2007-08-21 08:00,2007-11-10 17:00,,2008-01-17 08:01,2008-03-17 08:01,,PT_Normal,,,,,R+0f5t2fSTSWkat6rWGDUg,kSGM+VLESUGKPvy2QfHBkB,,,N,0,0,,,2007-02-01 02:41,2007-02-04 01:00,hbe4678,hbe4678,2007-08-21 08:00,2007-11-10 17:00,408
880,12457061,14517,6815932,13329,1,0,N,N,N,CP_Units,TT_Task,DT_FixedDUR2,RV_OK,TK_NotStart,CO02FI0130,02F Install In Line Instruments,,872.016666666667,520,40,0,0,0,40,0,0,0,,,,2008-03-23 08:01,2008-03-29 08:01,,2007-11-11 08:00,2007-11-15 17:00,2007-11-11 08:00,2007-11-15 17:00,2007-11-11 08:00,2007-11-15 17:00,,2008-03-23 08:01,2008-03-29 08:01,,PT_Normal,,,,,eCuc+mwgSVm7vC3tuSgI5A,2NYG4+L+1Ee7S86YJzt4WB,,,N,0,0,,,2007-02-01 02:41,2007-02-04 01:00,hbe4678,hbe4678,2007-11-11 08:00,2007-11-15 17:00,40
881,12457062,14517,6815932,13329,1,0,N,N,N,CP_Units,TT_Task,DT_FixedDUR2,RV_OK,TK_NotStart,CO02FI0140,02F Continuity Testing,,352.016666666667,0,40,0,0,0,40,0,0,0,,,,2008-03-18 08:01,2008-03-24 08:01,,2008-01-27 08:00,2008-01-31 17:00,2008-01-27 08:00,2008-01-31 17:00,2008-01-27 08:00,2008-01-31 17:00,,2008-03-18 08:01,2008-03-24 08:01,,PT_Normal,,,,,+F2n4erXSCC4aRo5dtlo3w,pRgWwI76nU6xABQVkKiZth,,,N,0,0,,,2007-02-01 02:41,2007-02-04 01:00,hbe4678,hbe4678,2008-01-27 08:00,2008-01-31 17:00,40
882,12457063,14517,6815945,13332,1,0,N,N,N,CP_Units,TT_Task,DT_FixedDUR2,RV_OK,TK_NotStart,SC02FI0150,02F Function Testing,,416.016666666667,0,152,0,0,0,152,0,0,0,,,,2008-03-24 08:01,2008-04-12 08:01,,2008-02-01 08:00,2008-02-19 17:00,2008-02-01 08:00,2008-02-19 17:00,2008-02-01 08:00,2008-02-19 17:00,,2008-03-24 08:01,2008-04-12 08:01,,PT_Normal,,,,,GKP0GjMbTd6gSchs6UC2xQ,A9CltdEQmkGeZ6vqblaPHh,,,N,0,0,,,2007-02-01 02:41,2007-02-04 01:00,hbe4678,hbe4678,2008-02-01 08:00,2008-02-19 17:00,152
883,12457064,14517,6815932,13329,1,0,N,N,N,CP_Units,TT_Task,DT_FixedDUR2,RV_OK,TK_NotStart,CO02GI0120,"02G Instrument JB's, Field Instr, Tray, Cable",,864,431.983333333333,736,0,0,0,736,0,0,0,,,,2007-11-20 08:01,2008-03-12 08:01,,2007-06-25 08:01,2007-11-01 08:01,2007-06-25 08:01,2007-11-01 08:01,2007-06-25 08:01,2007-11-01 08:01,,2007-11-20 08:01,2008-03-12 08:01,,PT_Normal,,,,,y49dY6JlQ5K2B5Moe0Q+gA,PkOzj2HkZ0OkfX1pU0P4bh,,,N,0,0,,,2007-02-01 02:41,2007-02-04 01:05,hbe4678,hbe4678,2007-06-25 08:01,2007-11-01 08:01,736
884,12457065,14517,6815932,13329,1,0,N,N,N,CP_Units,TT_Task,DT_FixedDUR2,RV_OK,TK_NotStart,CO02GI0130,02G Install In Line Instruments,,840,407.983333333333,72,0,0,0,72,0,0,0,,,,2008-03-09 08:01,2008-03-19 08:01,,2007-11-01 08:01,2007-11-12 08:01,2007-11-01 08:01,2007-11-12 08:01,2007-11-01 08:01,2007-11-12 08:01,,2008-03-09 08:01,2008-03-19 08:01,,PT_Normal,,,,,fDY0pf5OTgud5Hze1moB+w,4G2IDAbyT0qR+G+ZdlIPbx,,,N,0,0,,,2007-02-01 02:41,2007-02-04 01:05,hbe4678,hbe4678,2007-11-01 08:01,2007-11-12 08:01,72
885,12457066,14517,6815932,13329,1,0,N,N,N,CP_Units,TT_Task,DT_FixedDUR2,RV_OK,TK_NotStart,CO02GI0140,02G Continuity Testing,,432.016666666667,0,72,0,0,0,72,0,0,0,,,,2008-03-09 08:01,2008-03-19 08:01,,2008-01-06 08:00,2008-01-15 17:00,2008-01-06 08:00,2008-01-15 17:00,2008-01-06 08:00,2008-01-15 17:00,,2008-03-09 08:01,2008-03-19 08:01,,PT_Normal,,,,,k2il2WkLRkm28QV45hWwbg,owGNLfF8MEaZ4nEt2oDPVB,,,N,0,0,,,2007-02-01 02:41,2007-02-04 01:00,hbe4678,hbe4678,2008-01-06 08:00,2008-01-15 17:00,72
886,12457067,14517,6815945,13332,1,0,N,N,N,CP_Units,TT_Task,DT_FixedDUR2,RV_OK,TK_NotStart,SC02GI0150,02G Function Testing,,504.016666666667,0,272,0,0,0,272,0,0,0,,,,2008-03-09 08:01,2008-04-12 08:01,,2008-01-06 08:00,2008-02-08 17:00,2008-01-06 08:00,2008-02-08 17:00,2008-01-06 08:00,2008-02-08 17:00,,2008-03-09 08:01,2008-04-12 08:01,,PT_Normal,,,,,xqlbIx1rRpK8Em8jaidNXA,Zm/fEopoIkC539Z9Z5lQxx,,,N,0,0,,,2007-02-01 02:41,2007-02-04 01:00,hbe4678,hbe4678,2008-01-06 08:00,2008-02-08 17:00,272
887,12457068,14517,6815932,13329,1,0,N,N,N,CP_Units,TT_Task,DT_FixedDUR2,RV_OK,TK_NotStart,CO02JI0120,"02J Instrument JB's, Field Instr, Tray, Cable",,784.016666666667,448,544,0,0,0,544,0,0,0,,,,2007-12-16 08:01,2008-03-10 08:01,,2007-08-01 08:00,2007-11-10 17:00,2007-08-01 08:00,2007-11-10 17:00,2007-08-01 08:00,2007-11-10 17:00,,2007-12-16 08:01,2008-03-10 08:01,,PT_Normal,,,,,ixQUf5lnSvy7h4au3TJd7Q,69uCoOdWrkSnYfA3MinIGB,,,N,0,0,,,2007-02-01 02:41,2007-02-04 01:00,hbe4678,hbe4678,2007-08-01 08:00,2007-11-10 17:00,544
888,12457069,14517,6815932,13329,1,0,N,N,N,CP_Units,TT_Task,DT_FixedDUR2,RV_OK,TK_NotStart,CO02JI0130,02J Install In Line Instruments,,832.016666666667,496,56,0,0,0,56,0,0,0,,,,2008-03-17 08:01,2008-03-25 08:01,,2007-11-11 08:00,2007-11-18 17:00,2007-11-11 08:00,2007-11-18 17:00,2007-11-11 08:00,2007-11-18 17:00,,2008-03-17 08:01,2008-03-25 08:01,,PT_Normal,,,,,pN+iE9KoTjOSZ2btdwjfsQ,GPBDtb/6aUy8SSv6deQOWh,,,N,0,0,,,2007-02-01 02:41,2007-02-04 01:00,hbe4678,hbe4678,2007-11-11 08:00,2007-11-18 17:00,56
889,12457070,14517,6815932,13329,1,0,N,N,N,CP_Units,TT_Task,DT_FixedDUR2,RV_OK,TK_NotStart,CO02JI0140,02J Continuity Testing,,336.016666666667,0,56,0,0,0,56,0,0,0,,,,2008-03-09 08:01,2008-03-17 08:01,,2008-01-20 08:00,2008-01-27 17:00,2008-01-20 08:00,2008-01-27 17:00,2008-01-20 08:00,2008-01-27 17:00,,2008-03-09 08:01,2008-03-17 08:01,,PT_Normal,,,,,3o9bWRVITLOlI0mGdn/xCw,bJAVb64rpUOdNeifSX6JVB,,,N,0,0,,,2007-02-01 02:41,2007-02-04 01:00,hbe4678,hbe4678,2008-01-20 08:00,2008-01-27 17:00,56
890,12457071,14517,6815945,13332,1,0,N,N,N,CP_Units,TT_Task,DT_FixedDUR2,RV_OK,TK_NotStart,SC02JI0150,02J Function Testing,,392.016666666667,0,208,0,0,0,208,0,0,0,,,,2008-03-17 08:01,2008-04-12 08:01,,2008-01-28 08:00,2008-02-22 17:00,2008-01-28 08:00,2008-02-22 17:00,2008-01-28 08:00,2008-02-22 17:00,,2008-03-17 08:01,2008-04-12 08:01,,PT_Normal,,,,,VpESg4DrROWcarzwmeacCg,OvHXlV5R5km1EnYMRQXnvR,,,N,0,0,,,2007-02-01 02:41,2007-02-04 01:00,hbe4678,hbe4678,2008-01-28 08:00,2008-02-22 17:00,208
891,12457072,14517,6815932,13329,1,0,N,N,N,CP_Units,TT_Task,DT_FixedDUR2,RV_OK,TK_NotStart,CO02KI0120,"02K Instrument JB's, Field Instr, Tray, Cable",,616,231.983333333333,528,0,0,0,528,0,0,0,,,,2007-12-25 08:01,2008-03-11 08:01,,2007-08-29 08:01,2007-12-06 08:01,2007-08-29 08:01,2007-12-06 08:01,2007-08-29 08:01,2007-12-06 08:01,,2007-12-25 08:01,2008-03-11 08:01,,PT_Normal,,,,,2fwfQ7PaSBOLN3RWGzq6VA,t27jY51gxkCLBDc2hugflh,,,N,0,0,,,2007-02-01 02:41,2007-02-04 01:00,hbe4678,hbe4678,2007-08-29 08:01,2007-12-06 08:01,528
892,12457073,14517,6815932,13329,1,0,N,N,N,CP_Units,TT_Task,DT_FixedDUR2,RV_OK,TK_NotStart,CO02KI0130,02K Install In Line Instruments,,664,279.983333333333,56,0,0,0,56,0,0,0,,,,2008-03-18 08:01,2008-03-26 08:01,,2007-12-06 08:01,2007-12-15 08:01,2007-12-06 08:01,2007-12-15 08:01,2007-12-06 08:01,2007-12-15 08:01,,2008-03-18 08:01,2008-03-26 08:01,,PT_Normal,,,,,bJ0GfY2CT9Gdl9TdDGQP/Q,5yROt+IyIEe2gn8gH1JGSB,,,N,0,0,,,2007-02-01 02:41,2007-02-04 01:00,hbe4678,hbe4678,2007-12-06 08:01,2007-12-15 08:01,56
893,12457074,14517,6815932,13329,1,0,N,N,N,CP_Units,TT_Task,DT_FixedDUR2,RV_OK,TK_NotStart,CO02KI0140,02K Continuity Testing,,384.016666666667,0,56,0,0,0,56,0,0,0,,,,2008-03-10 08:01,2008-03-18 08:01,,2008-01-14 08:00,2008-01-21 17:00,2008-01-14 08:00,2008-01-21 17:00,2008-01-14 08:00,2008-01-21 17:00,,2008-03-10 08:01,2008-03-18 08:01,,PT_Normal,,,,,9a6KxRLqRACiMNYjSdLFnQ,6VDKO00eu0Wu+XXkNvx9PB,,,N,0,0,,,2007-02-01 02:41,2007-02-04 01:00,hbe4678,hbe4678,2008-01-14 08:00,2008-01-21 17:00,56
894,12457075,14517,6815945,13332,1,0,N,N,N,CP_Units,TT_Task,DT_FixedDUR2,RV_OK,TK_NotStart,SC02KI0150,02K Function Testing,,448.016666666667,0,200,0,0,0,200,0,0,0,,,,2008-03-18 08:01,2008-04-12 08:01,,2008-01-22 08:00,2008-02-15 17:00,2008-01-22 08:00,2008-02-15 17:00,2008-01-22 08:00,2008-02-15 17:00,,2008-03-18 08:01,2008-04-12 08:01,,PT_Normal,,,,,5ubvavetTjyxxAi1ilmRcw,nrnQT9LVu0utuxK4v5feAx,,,N,0,0,,,2007-02-01 02:41,2007-02-04 01:00,hbe4678,hbe4678,2008-01-22 08:00,2008-02-15 17:00,200
895,12457076,14517,6815932,13329,1,0,N,N,N,CP_Units,TT_Task,DT_FixedDUR2,RV_OK,TK_NotStart,CO02MI0120,"02M Instrument JB's, Field Instr, Tray, Cable",,760.016666666667,352,376,0,0,0,376,0,0,0,,,,2008-01-23 08:01,2008-03-18 08:01,,2007-09-06 08:00,2007-11-21 17:00,2007-09-06 08:00,2007-11-21 17:00,2007-09-06 08:00,2007-11-21 17:00,,2008-01-23 08:01,2008-03-18 08:01,,PT_Normal,,,,,LRqEEaXsSemUWU2D3R6oTw,qJIrlDfCLUWM913OU3uG1R,,,N,0,0,,,2007-02-01 02:41,2007-02-04 01:00,hbe4678,hbe4678,2007-09-06 08:00,2007-11-21 17:00,376
896,12457077,14517,6815932,13329,1,0,N,N,N,CP_Units,TT_Task,DT_FixedDUR2,RV_OK,TK_NotStart,CO02MI0130,02M Install In Line Instruments,,792.016666666667,384,40,0,0,0,40,0,0,0,,,,2008-03-23 08:01,2008-03-29 08:01,,2007-11-22 08:00,2007-11-27 17:00,2007-11-22 08:00,2007-11-27 17:00,2007-11-22 08:00,2007-11-27 17:00,,2008-03-23 08:01,2008-03-29 08:01,,PT_Normal,,,,,Uwa9SeOnRX6X9m0kGXa3ZA,fJZZszwTcUu3L3HMrchLRB,,,N,0,0,,,2007-02-01 02:41,2007-02-04 01:00,hbe4678,hbe4678,2007-11-22 08:00,2007-11-27 17:00,40
897,12457078,14517,6815932,13329,1,0,N,N,N,CP_Units,TT_Task,DT_FixedDUR2,RV_OK,TK_NotStart,CO02MI0140,02M Continuity Testing,,408.016666666667,0,40,0,0,0,40,0,0,0,,,,2008-03-19 08:01,2008-03-25 08:01,,2008-01-20 08:00,2008-01-24 17:00,2008-01-20 08:00,2008-01-24 17:00,2008-01-20 08:00,2008-01-24 17:00,,2008-03-19 08:01,2008-03-25 08:01,,PT_Normal,,,,,pFgilFX4TNuPsPSxeVkWtQ,cqYizR6R1U6tFSInvilzPR,,,N,0,0,,,2007-02-01 02:41,2007-02-04 01:00,hbe4678,hbe4678,2008-01-20 08:00,2008-01-24 17:00,40
898,12457079,14517,6815945,13332,1,0,N,N,N,CP_Units,TT_Task,DT_FixedDUR2,RV_OK,TK_NotStart,SC02MI0150,02M Function Testing,,480.016666666667,0,144,0,0,0,144,0,0,0,,,,2008-03-25 08:01,2008-04-12 08:01,,2008-01-25 08:00,2008-02-11 17:00,2008-01-25 08:00,2008-02-11 17:00,2008-01-25 08:00,2008-02-11 17:00,,2008-03-25 08:01,2008-04-12 08:01,,PT_Normal,,,,,JAoNJe/KS+CPs0x7rd3Wog,ga7XLHMg/0WloHh9Wcr+WR,,,N,0,0,,,2007-02-01 02:41,2007-02-04 01:00,hbe4678,hbe4678,2008-01-25 08:00,2008-02-11 17:00,144
899,12457080,14517,6815932,13329,1,0,N,N,N,CP_Units,TT_Task,DT_FixedDUR2,RV_OK,TK_NotStart,CO02LI0120,"02L Instrument JB's, Field Instr, Tray, Cable",,-95.9833333333333,0,1096,0,0,0,1096,0,0,0,,,,2007-08-27 08:01,2008-03-02 08:01,,2007-09-10 08:00,2008-03-15 17:00,2007-09-10 08:00,2008-03-15 17:00,2007-09-10 08:00,2008-03-15 17:00,,2007-08-27 08:01,2008-03-02 08:01,,PT_Normal,,,,,dlhnnNToRAu/qD+ebrCHMQ,,,,N,0,0,,,2007-02-01 02:41,2007-02-04 01:00,hbe4678,hbe4678,2007-09-10 08:00,2008-03-15 17:00,1096
900,12457081,14517,6815932,13329,1,0,N,N,N,CP_Units,TT_Task,DT_FixedDUR2,RV_OK,TK_NotStart,CO02LI0130,02L Install In Line Instruments,,-119.983333333333,0,112,0,0,0,112,0,0,0,,,,2008-02-27 08:01,2008-03-15 08:01,,2008-03-16 08:00,2008-03-31 17:00,2008-03-16 08:00,2008-03-31 17:00,2008-03-16 08:00,2008-03-31 17:00,,2008-02-27 08:01,2008-03-15 08:01,,PT_Normal,,,,,6UEPj+g7Tya+OtjIp91SEg,,,,N,0,0,,,2007-02-01 02:41,2007-02-04 01:00,hbe4678,hbe4678,2008-03-16 08:00,2008-03-31 17:00,112
901,12457082,14517,6815932,13329,1,0,N,N,N,CP_Units,TT_Task,DT_FixedDUR2,RV_OK,TK_NotStart,CO02LI0140,02L Continuity Testing,,-95.9833333333333,0,112,0,0,0,112,0,0,0,,,,2008-02-21 08:01,2008-03-09 08:01,,2008-03-06 08:00,2008-03-22 17:00,2008-03-06 08:00,2008-03-22 17:00,2008-03-06 08:00,2008-03-22 17:00,,2008-02-21 08:01,2008-03-09 08:01,,PT_Normal,,,,,xIY4thnjSgSb838WhWAEsA,,,,N,0,0,,,2007-02-01 02:41,2007-02-04 01:00,hbe4678,hbe4678,2008-03-06 08:00,2008-03-22 17:00,112
902,12457083,14517,6815945,13332,1,0,N,N,N,CP_Units,TT_Task,DT_FixedDUR2,RV_OK,TK_NotStart,SC02LI0150,02L Function Testing,,-135.983333333333,0,408,0,0,0,408,0,0,0,,,,2008-02-21 08:01,2008-04-12 08:01,,2008-03-09 08:00,2008-04-28 17:00,2008-03-09 08:00,2008-04-28 17:00,2008-03-09 08:00,2008-04-28 17:00,,2008-02-21 08:01,2008-04-12 08:01,,PT_Normal,,,,,l/ALHN9PSgakCwDCTnCbSg,,,,N,0,0,,,2007-02-01 02:41,2007-02-04 01:00,hbe4678,hbe4678,2008-03-09 08:00,2008-04-28 17:00,408
903,12457084,14517,6815932,13329,1,0,N,N,N,CP_Units,TT_Task,DT_FixedDUR2,RV_OK,TK_NotStart,CO02AI0120,"02A Instrument JB's, Field Instr, Tray, Cable",,624.016666666667,208,480,0,0,0,480,0,0,0,,,,2008-01-03 08:01,2008-03-13 08:01,,2007-09-06 08:00,2007-12-06 17:00,2007-09-06 08:00,2007-12-06 17:00,2007-09-06 08:00,2007-12-06 17:00,,2008-01-03 08:01,2008-03-13 08:01,,PT_Normal,,,,,wR9FvUT/S46MqFdFf3cY6g,5UDCqAhUBEq3uMQsh5Uyqx,,,N,0,0,,,2007-02-01 02:41,2007-02-04 01:00,hbe4678,hbe4678,2007-09-06 08:00,2007-12-06 17:00,480
904,12457085,14517,6815932,13329,1,0,N,N,N,CP_Units,TT_Task,DT_FixedDUR2,RV_OK,TK_NotStart,CO02AI0130,02A Install In Line Instruments,,672.016666666667,256,48,0,0,0,48,0,0,0,,,,2008-03-20 08:01,2008-03-27 08:01,,2007-12-08 08:00,2007-12-13 17:00,2007-12-08 08:00,2007-12-13 17:00,2007-12-08 08:00,2007-12-13 17:00,,2008-03-20 08:01,2008-03-27 08:01,,PT_Normal,,,,,UOZBMOywS+qedWAn++7jzA,0/QxArDDXkKkHeTbjEmocR,,,N,0,0,,,2007-02-01 02:41,2007-02-04 01:00,hbe4678,hbe4678,2007-12-08 08:00,2007-12-13 17:00,48
905,12457086,14517,6815932,13329,1,0,N,N,N,CP_Units,TT_Task,DT_FixedDUR2,RV_OK,TK_NotStart,CO02AI0140,02A Continuity Testing,,416.016666666667,0,48,0,0,0,48,0,0,0,,,,2008-03-13 08:01,2008-03-20 08:01,,2008-01-13 08:00,2008-01-19 17:00,2008-01-13 08:00,2008-01-19 17:00,2008-01-13 08:00,2008-01-19 17:00,,2008-03-13 08:01,2008-03-20 08:01,,PT_Normal,,,,,NAX5sPj3TxKQ2rhvo+r0nw,EpcF/IGl+kSxdrZwRB4CLx,,,N,0,0,,,2007-02-01 02:41,2007-02-04 01:00,hbe4678,hbe4678,2008-01-13 08:00,2008-01-19 17:00,48
906,12457087,14517,6815945,13332,1,0,N,N,N,CP_Units,TT_Task,DT_FixedDUR2,RV_OK,TK_NotStart,SC02AI0150,02A Function Testing,,480.016666666667,0,184,0,0,0,184,0,0,0,,,,2008-03-20 08:01,2008-04-12 08:01,,2008-01-20 08:00,2008-02-11 17:00,2008-01-20 08:00,2008-02-11 17:00,2008-01-20 08:00,2008-02-11 17:00,,2008-03-20 08:01,2008-04-12 08:01,,PT_Normal,,,,,e/4ZPQLASfqyRIIg2nRc5Q,X5aaRVjF6kO1+j4OOyIiVR,,,N,0,0,,,2007-02-01 02:41,2007-02-04 01:00,hbe4678,hbe4678,2008-01-20 08:00,2008-02-11 17:00,184
907,12457088,14517,6815932,13329,1,0,N,N,N,CP_Units,TT_WBS,DT_FixedDUR2,RV_OK,TK_NotStart,WO020I0100,020 Install Instruments & Test,1341,72.0166666666667,2600,1735.98333333333,0,70408.85,70408.85,1735.98333333333,0,0,0,,,,2007-07-09 08:00,2008-04-12 08:01,,2007-06-25 08:01,2008-03-31 17:00,2007-06-25 08:01,2008-03-31 17:00,2007-06-25 08:01,2008-03-31 17:00,,2007-07-09 08:00,2008-04-12 08:01,,PT_Normal,,,,,NhrryI0xSA6XnvHJ5r7c1w,Cf4In7xCuUiztwxY02RTjB,,,N,0,0,,,2007-02-01 02:41,2007-02-04 01:05,hbe4678,hbe4678,2007-06-25 08:01,2008-03-31 17:00,1735.98333333333
908,12457089,14517,6815932,13329,1,0,N,N,N,CP_Units,TT_Task,DT_FixedDUR2,RV_OK,TK_NotStart,CO02BI0120,"02B Instrument JB's, Field Instr, Tray, Cable",,1088.01666666667,504,56,0,0,0,56,0,0,0,,,,2008-03-25 08:01,2008-04-02 08:01,,2007-09-29 08:00,2007-10-20 17:00,2007-09-29 08:00,2007-10-20 17:00,2007-09-29 08:00,2007-10-20 17:00,,2008-03-25 08:01,2008-04-02 08:01,,PT_Normal,,,,,krK+xHV1Tl2cIcmC7uiS2g,0vRG82wtp0qhWn/Q3LZZyx,,,N,0,0,,,2007-02-01 02:41,2007-02-04 01:00,hbe4678,hbe4678,2007-09-29 08:00,2007-10-20 17:00,56
909,12457090,14517,6815932,13329,1,0,N,N,N,CP_Units,TT_Task,DT_FixedDUR2,RV_OK,TK_NotStart,CO02BI0130,02B Install In Line Instruments,,1040.01666666667,464,16,0,0,0,16,0,0,0,,,,2008-03-26 08:01,2008-03-29 08:01,,2007-10-21 08:00,2007-10-22 17:00,2007-10-21 08:00,2007-10-22 17:00,2007-10-21 08:00,2007-10-22 17:00,,2008-03-26 08:01,2008-03-29 08:01,,PT_Normal,,,,,X3lt/flHScq1wgObnE4yTA,hqHeCs2Ne0WuBbu6YZqZoB,,,N,0,0,,,2007-02-01 02:41,2007-02-04 01:00,hbe4678,hbe4678,2007-10-21 08:00,2007-10-22 17:00,16
910,12457091,14517,6815932,13329,1,0,N,N,N,CP_Units,TT_Task,DT_FixedDUR2,RV_OK,TK_NotStart,CO02BI0140,02B Continuity Testing,,584.016666666667,0,16,0,0,0,16,0,0,0,,,,2008-04-07 08:01,2008-04-09 08:01,,2008-01-13 08:00,2008-01-14 17:00,2008-01-13 08:00,2008-01-14 17:00,2008-01-13 08:00,2008-01-14 17:00,,2008-04-07 08:01,2008-04-09 08:01,,PT_Normal,,,,,NKzGTEpNS7i6ma3Nfeg2fg,yUlaWX2po0eYEsZPdoG1/R,,,N,0,0,,,2007-02-01 02:41,2007-02-04 01:00,hbe4678,hbe4678,2008-01-13 08:00,2008-01-14 17:00,16
911,12457092,14517,6815945,13332,1,0,N,N,N,CP_Units,TT_Task,DT_FixedDUR2,RV_OK,TK_NotStart,SC02BI0150,02B Function Testing,,680.016666666667,0,24,0,0,0,24,0,0,0,,,,2008-04-09 08:01,2008-04-12 08:01,,2008-01-15 08:00,2008-01-17 17:00,2008-01-15 08:00,2008-01-17 17:00,2008-01-15 08:00,2008-01-17 17:00,,2008-04-09 08:01,2008-04-12 08:01,,PT_Normal,,,,,hRnhkxQYR4WZpAKOTNG2KA,/s88vj9sd0KNbG93OrzJNx,,,N,0,0,,,2007-02-01 02:41,2007-02-04 01:00,hbe4678,hbe4678,2008-01-15 08:00,2008-01-17 17:00,24
912,12457093,14517,6815932,13329,1,0,N,N,N,CP_Units,TT_Task,DT_FixedDUR2,RV_OK,TK_NotStart,CO02DI0120,"02D Instrument JB's, Field Instr, Tray, Cable",,544,72,328,0,0,0,328,0,0,0,,,,2008-02-03 08:00,2008-03-20 17:00,,2007-11-10 08:00,2008-01-01 17:00,2007-11-10 08:00,2008-01-01 17:00,2007-11-10 08:00,2008-01-01 17:00,,2008-02-03 08:00,2008-03-20 17:00,,PT_Normal,,,,,CGKyY5qMQ+Sa2dituy2CuQ,EvIq5vb+0U6391LQ1dDyDB,,,N,0,0,,,2007-02-01 02:41,2007-02-01 02:43,hbe4678,hbe4678,2007-11-10 08:00,2008-01-01 17:00,328
913,12457094,14517,6815932,13329,1,0,N,N,N,CP_Units,TT_Task,DT_FixedDUR2,RV_OK,TK_NotStart,CO02DI0130,02D Install In Line Instruments,,560.016666666667,96,32,0,0,0,32,0,0,0,,,,2008-03-24 08:01,2008-03-29 08:01,,2008-01-02 08:00,2008-01-06 17:00,2008-01-02 08:00,2008-01-06 17:00,2008-01-02 08:00,2008-01-06 17:00,,2008-03-24 08:01,2008-03-29 08:01,,PT_Normal,,,,,VYt7z1CrQ0iP6wgDRVdmqQ,M4Yo45laXkaTq+peni0coB,,,N,0,0,,,2007-02-01 02:41,2007-02-04 01:00,hbe4678,hbe4678,2008-01-02 08:00,2008-01-06 17:00,32
914,12457095,14517,6815932,13329,1,0,N,N,N,CP_Units,TT_Task,DT_FixedDUR2,RV_OK,TK_NotStart,CO02DI0140,02D Continuity Testing,,472,0,32,0,0,0,32,0,0,0,,,,2008-03-24 08:00,2008-03-27 17:00,,2008-01-15 08:00,2008-01-19 17:00,2008-01-15 08:00,2008-01-19 17:00,2008-01-15 08:00,2008-01-19 17:00,,2008-03-24 08:00,2008-03-27 17:00,,PT_Normal,,,,,TzB+7OvAQcut2Ko65qz/0g,fXPDkiy+KkCLfmRMm1HTbx,,,N,0,0,,,2007-02-01 02:41,2007-02-01 02:43,hbe4678,hbe4678,2008-01-15 08:00,2008-01-19 17:00,32
915,12457096,14517,6815945,13332,1,0,N,N,N,CP_Units,TT_Task,DT_FixedDUR2,RV_OK,TK_NotStart,SC02DI0150,02D Function Testing,,544.016666666667,0,120,0,0,0,120,0,0,0,,,,2008-03-28 08:01,2008-04-12 08:01,,2008-01-20 08:00,2008-02-03 17:00,2008-01-20 08:00,2008-02-03 17:00,2008-01-20 08:00,2008-02-03 17:00,,2008-03-28 08:01,2008-04-12 08:01,,PT_Normal,,,,,uWqOJVU7QgSs47oPc4XT4w,vEHC0Nd4fUWLwMJgbNMQOh,,,N,0,0,,,2007-02-01 02:41,2007-02-04 01:00,hbe4678,hbe4678,2008-01-20 08:00,2008-02-03 17:00,120
916,12457097,14517,6815932,13329,1,0,N,N,N,CP_Units,TT_Task,DT_FixedDUR2,RV_OK,TK_NotStart,CO02EI0120,"02E Instrument JB's, Field Instr, Tray, Cable",,536.016666666667,160,448,0,0,0,448,0,0,0,,,,2008-01-09 08:01,2008-03-15 08:01,,2007-10-08 08:00,2007-12-26 17:00,2007-10-08 08:00,2007-12-26 17:00,2007-10-08 08:00,2007-12-26 17:00,,2008-01-09 08:01,2008-03-15 08:01,,PT_Normal,,,,,1KXGiH4YRF6/nu+REPhwuA,Um1i2yn5Lk+W61botxGZox,,,N,0,0,,,2007-02-01 02:41,2007-02-04 01:00,hbe4678,hbe4678,2007-10-08 08:00,2007-12-26 17:00,448
917,12457098,14517,6815932,13329,1,0,N,N,N,CP_Units,TT_Task,DT_FixedDUR2,RV_OK,TK_NotStart,CO02EI0130,02E Install In Line Instruments,,584.016666666667,208,48,0,0,0,48,0,0,0,,,,2008-03-22 08:01,2008-03-29 08:01,,2007-12-27 08:00,2008-01-02 17:00,2007-12-27 08:00,2008-01-02 17:00,2007-12-27 08:00,2008-01-02 17:00,,2008-03-22 08:01,2008-03-29 08:01,,PT_Normal,,,,,ENJcKh6MT26m8iNcCyQJCg,5rPCZr6fj0GrCU7893mwxR,,,N,0,0,,,2007-02-01 02:41,2007-02-04 01:00,hbe4678,hbe4678,2007-12-27 08:00,2008-01-02 17:00,48
918,12457099,14517,6815932,13329,1,0,N,N,N,CP_Units,TT_Task,DT_FixedDUR2,RV_OK,TK_NotStart,CO02EI0140,02E Continuity Testing,,376.016666666667,0,48,0,0,0,48,0,0,0,,,,2008-03-15 08:01,2008-03-22 08:01,,2008-01-20 08:00,2008-01-26 17:00,2008-01-20 08:00,2008-01-26 17:00,2008-01-20 08:00,2008-01-26 17:00,,2008-03-15 08:01,2008-03-22 08:01,,PT_Normal,,,,,e+JLBE19SRyS5SChADzDDA,h7nlaAqOy02q+3wBPxVfyR,,,N,0,0,,,2007-02-01 02:41,2007-02-04 01:00,hbe4678,hbe4678,2008-01-20 08:00,2008-01-26 17:00,48
919,12457100,14517,6815933,13329,1,0,N,N,N,CP_Units,TT_WBS,DT_FixedDUR2,RV_OK,TK_NotStart,WO020K0100,020 Site Prep,1351,72.0166666666667,2600,800,0,9372.96,9372.96,800,0,0,0,,,,2007-12-11 08:01,2008-04-12 08:01,,2007-12-01 08:00,2008-03-31 17:00,2007-12-01 08:00,2008-03-31 17:00,2007-12-01 08:00,2008-03-31 17:00,,2007-12-11 08:01,2008-04-12 08:01,,PT_Normal,,,,,tXkeZNVlTgCQrGayyAxOUQ,xYwz1nAfy0q/74DCkvnqgg,,,N,0,0,,,2007-02-01 02:41,2007-02-04 01:05,hbe4678,hbe4678,2007-12-01 08:00,2008-03-31 17:00,800
920,12457101,14517,6815933,13329,1,0,N,N,N,CP_Units,TT_Task,DT_FixedDUR2,RV_OK,TK_NotStart,CO020K0100,020 Site Prep - Guard Posts & Gravel,,72.0166666666667,480,800,0,0,0,800,0,0,0,,,,2007-12-11 08:01,2008-04-12 08:01,,2007-12-01 08:00,2008-03-31 17:00,2007-12-01 08:00,2008-03-31 17:00,2007-12-01 08:00,2008-03-31 17:00,,2007-12-11 08:01,2008-04-12 08:01,,PT_Normal,,,,,RxNDFULSTVm7esHAFe/uwg,NJNGXo+/SEGWHoLPJ954pA,,,N,0,0,,,2007-02-01 02:41,2007-02-04 01:00,hbe4678,hbe4678,2007-12-01 08:00,2008-03-31 17:00,800
921,12457102,14517,6815934,13329,1,0,N,N,N,CP_Units,TT_Task,DT_FixedDUR2,RV_OK,TK_NotStart,CO02KM0150,02K Set Rotating Equipment,,1304.01666666667,0,48,0,0,0,48,0,0,0,,,,2007-11-24 08:01,2007-12-01 08:01,,2007-04-25 08:00,2007-05-01 17:00,2007-04-25 08:00,2007-05-01 17:00,2007-04-25 08:00,2007-05-01 17:00,,2007-11-24 08:01,2007-12-01 08:01,,PT_Normal,,,,,SD1yA9++QwCJpicTor3Zfw,qLu9/npnaEO82HWLS5CBpx,,,N,0,0,,,2007-02-01 02:41,2007-02-04 01:00,hbe4678,hbe4678,2007-04-25 08:00,2007-05-01 17:00,48
922,12457103,14517,6815934,13329,1,0,N,N,N,CP_Units,TT_Task,DT_FixedDUR2,RV_OK,TK_Active,CO02MM0110,02M Set Static Equipment - Gen'l,,1176.01666666667,88,224,0,0,0,224,0,0,0,,2006-09-20 00:00,,2007-12-31 08:01,2008-02-02 08:01,,2007-06-14 08:00,2007-07-16 17:00,2007-06-14 08:00,2007-07-16 17:00,2007-04-26 08:00,2007-05-28 17:00,,2007-12-31 08:01,2008-02-02 08:01,,PT_Normal,,,,,P7fHD+eOT9WDPV0BrWvxIQ,jyJ607bYJUy0iVd3gEVcrh,,,N,0,0,,,2007-02-01 02:41,2007-02-04 01:00,hbe4678,hbe4678,2007-06-14 08:00,2007-07-16 17:00,224
923,12457104,14517,6815934,13329,1,0,N,N,N,CP_Units,TT_Task,DT_FixedDUR2,RV_OK,TK_NotStart,CO02MM0130,02M Set (Heavy Lift) - 105-D (Ammonia Converter),,448.016666666667,0,40,0,0,0,40,0,0,0,,,,2007-09-04 08:01,2007-09-10 08:01,,2007-07-01 08:00,2007-07-05 17:00,2007-07-01 08:00,2007-07-05 17:00,2007-07-01 08:00,2007-07-05 17:00,,2007-09-04 08:01,2007-09-10 08:01,,PT_Normal,,,,,ndH/KMdcT1WP1B/8geD0aw,01pVJ0duVkunXd9Wa/JxwB,,,N,0,0,,,2007-02-01 02:41,2007-02-04 01:00,hbe4678,hbe4678,2007-07-01 08:00,2007-07-05 17:00,40
924,12457105,14517,6815934,13329,1,0,N,N,N,CP_Units,TT_Task,DT_FixedDUR2,RV_OK,TK_NotStart,CO02NM0110,02N Set (Heavy Lift) - 120-C (Ammonia Unitized Chiller),,448.016666666667,0,40,0,0,0,40,0,0,0,,,,2007-09-19 08:01,2007-10-01 08:01,,2007-07-12 08:00,2007-07-17 17:00,2007-07-12 08:00,2007-07-17 17:00,2007-07-12 08:00,2007-07-17 17:00,,2007-09-19 08:01,2007-10-01 08:01,,PT_Normal,,,,,9fshtvAEQ4u9WmsHlwbtIA,vKH0AtMka02/VT0Dp0J1DB,,,N,0,0,,,2007-02-01 02:41,2007-02-04 01:00,hbe4678,hbe4678,2007-07-12 08:00,2007-07-17 17:00,40
925,12457106,14517,6815934,13329,1,0,N,N,N,CP_Units,TT_Task,DT_FixedDUR2,RV_OK,TK_NotStart,CO02PM0110,02P Set 101-U Dearator,,824.016666666667,0,96,0,0,0,96,0,0,0,,,,2007-12-04 08:01,2007-12-18 08:01,,2007-07-15 08:00,2007-07-28 17:00,2007-07-15 08:00,2007-07-28 17:00,2007-07-15 08:00,2007-07-28 17:00,,2007-12-04 08:01,2007-12-18 08:01,,PT_Normal,,,,,JEQEkLQ0TvG7gUpoyyw2cQ,Q04nrOMKMUq3SuIaqVaOTx,,,N,0,0,,,2007-02-01 02:41,2007-02-04 01:00,hbe4678,hbe4678,2007-07-15 08:00,2007-07-28 17:00,96
926,12457107,14517,6815934,13329,1,0,N,N,N,CP_Units,TT_Task,DT_FixedDUR2,RV_OK,TK_NotStart,CO02QM0110,02Q Set 101-F Steam Drum,,808.016666666667,0,48,0,0,0,48,0,0,0,,,,2007-12-02 08:01,2007-12-09 08:01,,2007-07-15 08:00,2007-07-21 17:00,2007-07-15 08:00,2007-07-21 17:00,2007-07-15 08:00,2007-07-21 17:00,,2007-12-02 08:01,2007-12-09 08:01,,PT_Normal,,,,,WYvYEJa5R+qKhdEeOkUKyA,9q/t2qsPo0S1xqXxZktvkx,,,N,0,0,,,2007-02-01 02:41,2007-02-04 01:00,hbe4678,hbe4678,2007-07-15 08:00,2007-07-21 17:00,48
927,12457108,14517,6815934,13329,1,0,N,N,N,CP_Units,TT_Task,DT_FixedDUR2,RV_OK,TK_NotStart,CO02HM0120,02H Set (Heavey Lift) -  101-C & 102-C,,80.0166666666667,0,40,0,0,0,40,0,0,0,,,,2007-09-10 08:01,2007-09-19 08:01,,2007-08-29 08:00,2007-09-03 17:00,2007-08-29 08:00,2007-09-03 17:00,2007-08-29 08:00,2007-09-03 17:00,,2007-09-10 08:01,2007-09-19 08:01,,PT_Normal,,,,,mKFCF+eASZKTIdnVL2WV8g,zyiqX26tTUSVMuP4upzsTR,,,N,0,0,,,2007-02-01 02:41,2007-02-04 01:00,hbe4678,hbe4678,2007-08-29 08:00,2007-09-03 17:00,40
928,12457109,14517,6815934,13329,1,0,N,N,N,CP_Units,TT_Task,DT_FixedDUR2,RV_OK,TK_NotStart,CO02HM0130,02H Set (Heavy Lift) - 103-D (Secondary Reformer),,448.016666666667,0,40,0,0,0,40,0,0,0,,,,2007-08-06 08:01,2007-08-12 08:01,,2007-06-02 08:00,2007-06-06 17:00,2007-06-02 08:00,2007-06-06 17:00,2007-06-02 08:00,2007-06-06 17:00,,2007-08-06 08:01,2007-08-12 08:01,,PT_Normal,,,,,oOiGD/k9QoK+8OnY8zi03A,pIhqRFACxk2HSviGhN+hCR,,,N,0,0,,,2007-02-01 02:41,2007-02-04 01:00,hbe4678,hbe4678,2007-06-02 08:00,2007-06-06 17:00,40
929,12457110,14517,6815934,13329,1,100,N,N,N,CP_Units,TT_Task,DT_FixedDUR2,RV_OK,TK_Complete,CO02HM0140,02H Set - 156-F Steam Blowdown Drum,,,,0,0,0,0,24,0,0,0,,2006-10-19 00:00,2006-10-19 00:00,2007-08-23 08:01,2007-08-23 08:01,,2007-01-27 00:00,2007-01-27 00:00,,,2007-06-23 08:00,2007-06-25 17:00,,,,,PT_Normal,,,,,uvYlMvLRRTG54K4iYjsnWA,ACEJWFO8ZkaeWAHVMmnHqh,,,N,0,0,,,2007-02-01 02:41,2007-02-04 01:05,hbe4678,hbe4678,,,0
930,12457111,14517,6815934,13329,1,100,N,N,N,CP_Units,TT_Task,DT_FixedDUR2,RV_OK,TK_Complete,CO02CM0110,02C Set Static Equipment - 128/167-C,,,,0,0,0,0,224,0,0,0,,2006-12-10 00:00,2006-12-10 00:00,2008-02-19 08:01,2008-02-19 08:01,,2007-01-27 08:00,2007-01-27 08:00,,,2007-04-17 08:00,2007-05-19 17:00,,,,,PT_Normal,,,,,L/NbSigASLSPSkQa/3IhCA,bHx/vGyylUeAK0ltGh9VAx,,,N,0,0,,,2007-02-01 02:41,2007-02-04 01:05,hbe4678,hbe4678,,,0
931,12457112,14517,6815934,13329,1,0,N,N,N,CP_Units,TT_Task,DT_FixedDUR2,RV_OK,TK_NotStart,CO02CM0150,02C Set Rotating Equipment - 112-J/JA/JM,,1640.01666666667,480,32,0,0,0,32,0,0,0,,,,2008-01-17 08:01,2008-01-22 08:01,,2007-04-25 08:00,2007-04-29 17:00,2007-04-25 08:00,2007-04-29 17:00,2007-04-25 08:00,2007-04-29 17:00,,2008-01-17 08:01,2008-01-22 08:01,,PT_Normal,,,,,czs0Jo07SISBo5GDKkrWjQ,mJArHhSgJ0qP+jCufObSJx,,,N,0,0,,,2007-02-01 02:41,2007-02-04 01:00,hbe4678,hbe4678,2007-04-25 08:00,2007-04-29 17:00,32
932,12457113,14517,6815934,13329,1,0,N,N,N,CP_Units,TT_Task,DT_FixedDUR2,RV_OK,TK_NotStart,CO02CM0130,02C Install - 103/105-J Compressors & Aux. Equip.,,1336.01666666667,0,800,0,0,0,800,0,0,0,,,,2007-08-30 08:01,2008-01-22 08:01,,2007-02-17 08:00,2007-06-12 17:00,2007-02-17 08:00,2007-06-12 17:00,2007-02-17 08:00,2007-06-12 17:00,,2007-08-30 08:01,2008-01-22 08:01,,PT_Normal,,,,,Cq42q+5kTdy3LWpD5RhFwQ,0R8FVTUtGEa1eFWVdw2h4B,,,N,0,0,,,2007-02-01 02:41,2007-02-04 01:00,hbe4678,hbe4678,2007-02-17 08:00,2007-06-12 17:00,800
933,12457114,14517,6815934,13329,1,100,N,N,N,CP_Units,TT_Task,DT_FixedDUR2,RV_OK,TK_Complete,CO02CM0140,02C Set - 103-JTC Surface Condenser,,,,0,0,0,0,24,0,0,0,,2006-11-01 00:00,2006-11-02 00:00,2008-02-18 08:01,2008-02-18 08:01,,2007-01-27 00:00,2007-01-27 00:00,,,2007-04-11 08:00,2007-04-14 17:00,,,,,PT_Normal,,,,,2bvO5BvpQeeo0k9W692iDQ,LImAbVzy5kumZZL5HRfMtR,,,N,0,0,,,2007-02-01 02:41,2007-02-04 01:05,hbe4678,hbe4678,,,0
934,12457115,14517,6815934,13329,1,0,N,N,N,CP_Units,TT_Task,DT_FixedDUR2,RV_OK,TK_NotStart,CO020M0130,Demobilize Heavy Lift Crane,,448.016666666667,376,72,0,0,0,72,0,0,0,,,,2007-12-01 08:01,2007-12-11 08:01,,2007-09-04 08:00,2007-09-15 17:00,2007-09-04 08:00,2007-09-15 17:00,2007-09-04 08:00,2007-09-15 17:00,,2007-12-01 08:01,2007-12-11 08:01,,PT_Normal,,,,,AG9HiZIhQYS19fbdYvJTXQ,NcpVkwt6oE+knUktCh7ZDR,,,N,0,0,,,2007-02-01 02:41,2007-02-04 01:00,hbe4678,hbe4678,2007-09-04 08:00,2007-09-15 17:00,72
935,12457116,14517,6815934,13329,1,0,N,N,N,CP_Units,TT_Task,DT_FixedDUR2,RV_OK,TK_NotStart,CO02CM0125,02C Set - 103/105-J Compressors,,1336.01666666667,0,40,0,0,0,40,0,0,0,2007-02-15 17:00,,,2007-08-25 08:01,2007-08-30 08:01,,2007-02-11 08:00,2007-02-15 17:00,2007-02-11 08:00,2007-02-15 17:00,2007-02-11 08:00,2007-02-15 17:00,,2007-08-25 08:01,2007-08-30 08:01,CS_MEOA,PT_Normal,,,,,gs5pu6qxQOSRbOrWvfUPgQ,pIhqRFACxk2HSviGhN+hCR,,,N,0,0,,,2007-02-01 02:41,2007-02-04 01:00,hbe4678,hbe4678,2007-02-11 08:00,2007-02-15 17:00,40
936,12457117,14517,6815934,13329,1,0,N,N,N,CP_Units,TT_Task,DT_FixedDUR2,RV_OK,TK_NotStart,CO02GM0125,02G Set - 101-J/JT Air Compr.,,840,0,192,0,0,0,192,0,0,0,,,,2007-08-07 08:01,2007-09-04 08:01,,2007-04-07 08:01,2007-05-05 08:01,2007-04-07 08:01,2007-05-05 08:01,2007-04-07 08:01,2007-05-05 08:01,,2007-08-07 08:01,2007-09-04 08:01,,PT_Normal,,,,,0Ka20HG4T4CvuH+Wgddz+g,4S16Dy+ni0S9pTttcNwWxR,,,N,0,0,,,2007-02-01 02:41,2007-02-04 01:00,hbe4678,hbe4678,2007-04-07 08:01,2007-05-05 08:01,192
937,12457118,14517,6815934,13329,1,0,N,N,N,CP_Units,TT_Task,DT_FixedDUR2,RV_OK,TK_NotStart,CO020M0110,Mobilize / Assemble / Test Heavy Lift Crane,,448.016666666667,0,96,0,0,0,96,0,0,0,2007-05-19 00:00,,,2007-07-23 08:01,2007-08-06 08:01,,2007-05-19 08:00,2007-05-31 17:00,2007-05-19 08:00,2007-05-31 17:00,2007-05-19 08:00,2007-05-31 17:00,,2007-07-23 08:01,2007-08-06 08:01,CS_MSOA,PT_Normal,,,,,VBgL53pUTZ6USQkUn9n21A,fG4PKfLm5kmdZhLVFJptLB,,,N,0,0,,,2007-02-01 02:41,2007-02-04 01:00,hbe4678,hbe4678,2007-05-19 08:00,2007-05-31 17:00,96
938,12457119,14517,6815934,13329,1,0,N,N,N,CP_Units,TT_LOE,DT_FixedDUR2,RV_OK,TK_NotStart,CO020M0120,Heavy Lift Crane Useage,,448.016666666667,0,648,0,0,0,360,0,0,0,,,,2007-08-06 08:01,2007-12-01 08:01,,2007-06-02 08:00,2007-09-03 17:00,2007-06-02 08:00,2007-09-03 17:00,2007-06-02 08:00,2007-07-23 17:00,,2007-08-06 08:01,2007-12-01 08:01,,PT_Normal,,,,,c395BgFWS/KhOxOrAx/PwQ,jEDgAKBp/UGxasr6RqvkZR,,,N,0,0,,,2007-02-01 02:41,2007-02-04 01:05,hbe4678,hbe4678,2007-06-02 08:00,2007-09-03 17:00,648
939,12457120,14517,6815934,13329,1,0,N,N,N,CP_Units,TT_Task,DT_FixedDUR2,RV_OK,TK_NotStart,CO02MM0140,02M Set (Heavy Lift) - 121-C (Ammonia Conv./ Effl Exch.),,448.016666666667,0,40,0,0,0,40,0,0,0,,,,2007-09-10 08:01,2007-09-19 08:01,,2007-07-07 08:00,2007-07-11 17:00,2007-07-07 08:00,2007-07-11 17:00,2007-07-07 08:00,2007-07-11 17:00,,2007-09-10 08:01,2007-09-19 08:01,,PT_Normal,,,,,LsxeTa9NRX+LxeYOobIZjw,eIztvgOC+0im6/XNOVqcOB,,,N,0,0,,,2007-02-01 02:41,2007-02-04 01:00,hbe4678,hbe4678,2007-07-07 08:00,2007-07-11 17:00,40
940,12457121,14517,6815934,13329,1,0,N,N,N,CP_Units,TT_Task,DT_FixedDUR2,RV_OK,TK_NotStart,CO02HM0227,02H Install Spring Hangers & Align (101-B),,1488.01666666667,96,288,0,0,0,288,0,0,0,,,,2008-03-01 08:01,2008-04-12 08:01,,2007-06-30 08:00,2007-08-09 17:00,2007-06-30 08:00,2007-08-09 17:00,2007-06-30 08:00,2007-08-09 17:00,,2008-03-01 08:01,2008-04-12 08:01,,PT_Normal,,,,,IpTV6TeQTWu2+RseZLJ7KA,,,,N,0,0,,,2007-02-01 02:41,2007-02-04 01:00,hbe4678,hbe4678,2007-06-30 08:00,2007-08-09 17:00,288
941,12457122,14517,6815934,13329,1,0,N,N,N,CP_Units,TT_Task,DT_FixedDUR2,RV_OK,TK_NotStart,CO02HM0230,02H Set Convection Sections (101-B),,864.016666666667,0,192,0,0,0,192,0,0,0,,,,2007-09-06 08:01,2007-10-27 08:01,,2007-05-03 08:00,2007-05-30 17:00,2007-05-03 08:00,2007-05-30 17:00,2007-05-03 08:00,2007-05-30 17:00,,2007-09-06 08:01,2007-10-27 08:01,,PT_Normal,,,,,HX3zOuGjSiW1UMenyFnXew,,,,N,0,0,,,2007-02-01 02:41,2007-02-04 01:00,hbe4678,hbe4678,2007-05-03 08:00,2007-05-30 17:00,192
942,12457123,14517,6815934,13329,1,0,N,N,N,CP_Units,TT_Task,DT_FixedDUR2,RV_OK,TK_NotStart,CO02HM0235,02H Erect Preheater (101-B),,1400.01666666667,0,384,0,0,0,384,0,0,0,,,,2008-01-19 08:01,2008-03-15 08:01,,2007-05-31 08:00,2007-07-25 17:00,2007-05-31 08:00,2007-07-25 17:00,2007-05-31 08:00,2007-07-25 17:00,,2008-01-19 08:01,2008-03-15 08:01,,PT_Normal,,,,,yfeOvePaSP601WdFQsy8Wg,,,,N,0,0,,,2007-02-01 02:41,2007-02-04 01:00,hbe4678,hbe4678,2007-05-31 08:00,2007-07-25 17:00,384
943,12457124,14517,6815934,13329,1,0,N,N,N,CP_Units,TT_Task,DT_FixedDUR2,RV_OK,TK_NotStart,CO02HM0240,02H Set Stack for (101-B),,1784.01666666667,0,192,0,0,0,192,0,0,0,,,,2008-02-16 08:01,2008-03-15 08:01,,2007-05-03 08:00,2007-05-30 17:00,2007-05-03 08:00,2007-05-30 17:00,2007-05-03 08:00,2007-05-30 17:00,,2008-02-16 08:01,2008-03-15 08:01,,PT_Normal,,,,,5jL4JvopRY28coF66SCm1Q,,,,N,0,0,,,2007-02-01 02:41,2007-02-04 01:00,hbe4678,hbe4678,2007-05-03 08:00,2007-05-30 17:00,192
944,12457125,14517,6815934,13329,1,0,N,N,N,CP_Units,TT_Task,DT_FixedDUR2,RV_OK,TK_NotStart,CO02AM0150,02A Set Rotating Equipment,,1656.01666666667,0,192,0,0,0,192,0,0,0,,,,2008-01-03 08:01,2008-01-31 08:01,,2007-04-09 08:00,2007-05-06 17:00,2007-04-09 08:00,2007-05-06 17:00,2007-04-09 08:00,2007-05-06 17:00,,2008-01-03 08:01,2008-01-31 08:01,,PT_Normal,,,,,hEQNmnxJT6WG0E6DbeK2Fg,mJArHhSgJ0qP+jCufObSJx,,,N,0,0,,,2007-02-01 02:41,2007-02-04 01:00,hbe4678,hbe4678,2007-04-09 08:00,2007-05-06 17:00,192
945,12457126,14517,6815934,13329,1,0,N,N,N,CP_Units,TT_WBS,DT_FixedDUR2,RV_OK,TK_Active,WO020M0100,020 Major Equipment,1347,1248.01666666667,3776,1584,5018.4,328498.17,333516.57,1584,0,0,0,,2006-09-20 00:00,,2007-06-07 08:01,2008-04-12 08:01,,2007-01-27 08:00,2007-09-15 17:00,2007-01-27 08:00,2007-09-15 17:00,2007-01-27 08:00,2007-09-15 17:00,,2007-06-07 08:01,2008-04-12 08:01,,PT_Normal,,,,,VMTZErJqQAWloZFkWk0/Aw,ysYXmidC8US8+shZJYDzix,,,N,0,0,,,2007-02-01 02:41,2007-02-04 01:05,hbe4678,hbe4678,2007-01-27 08:00,2007-09-15 17:00,1584
946,12457127,14517,6815934,13329,1,0,N,N,N,CP_Units,TT_Task,DT_FixedDUR2,RV_OK,TK_Active,CO02AM0110,02A Set Static Equipment,,1152.01666666667,0,96,0,0,0,96,0,0,0,,2006-11-01 00:00,,2008-01-17 08:01,2008-01-31 08:01,,2007-07-05 08:00,2007-07-18 17:00,2007-07-05 08:00,2007-07-18 17:00,2007-05-07 08:00,2007-05-20 17:00,,2008-01-17 08:01,2008-01-31 08:01,,PT_Normal,,,,,WFA8QVjFSKCPY3nb2pBHhg,bHx/vGyylUeAK0ltGh9VAx,,,N,0,0,,,2007-02-01 02:41,2007-02-04 01:00,hbe4678,hbe4678,2007-07-05 08:00,2007-07-18 17:00,96
947,12457128,14517,6815934,13329,1,100,N,N,N,CP_Units,TT_Task,DT_FixedDUR2,RV_OK,TK_Complete,CO02BM0110,02B Set Static Equipment,,,,0,0,0,0,96,0,0,0,,2006-12-28 00:00,2006-12-28 00:00,2008-02-24 08:01,2008-02-24 08:01,,2007-02-24 08:01,2007-02-24 08:01,,,2007-04-05 08:00,2007-04-18 17:00,,,,,PT_Normal,,,,,WCV5ZYWHTMeA4ELBkvmnbg,PjIPNGOhSEGGVnWxZfpXRR,,,N,0,0,,,2007-02-01 02:41,2007-02-04 01:05,hbe4678,hbe4678,,,0
948,12457129,14517,6815934,13329,1,0,N,N,N,CP_Units,TT_Task,DT_FixedDUR2,RV_OK,TK_Active,CO02DM0110,02D Set Static Equipment,,1064.01666666667,0,96,0,0,0,96,0,0,0,,2006-11-01 00:00,,2007-12-29 08:01,2008-01-12 08:01,,2007-06-28 08:00,2007-07-11 17:00,2007-06-28 08:00,2007-07-11 17:00,2007-04-28 08:00,2007-05-10 17:00,,2007-12-29 08:01,2008-01-12 08:01,,PT_Normal,,,,,8q95NgQgQKOMVBm6qA1OMA,HMK0Bt7P70q/ckY/96o4TR,,,N,0,0,,,2007-02-01 02:41,2007-02-04 01:00,hbe4678,hbe4678,2007-06-28 08:00,2007-07-11 17:00,96
949,12457130,14517,6815934,13329,1,0,N,N,N,CP_Units,TT_Task,DT_FixedDUR2,RV_OK,TK_NotStart,CO02DM0150,02D Set Rotating Equipment,,1456.01666666667,0,96,0,0,0,96,0,0,0,,,,2007-12-29 08:01,2008-01-12 08:01,,2007-05-02 08:00,2007-05-15 17:00,2007-05-02 08:00,2007-05-15 17:00,2007-05-02 08:00,2007-05-15 17:00,,2007-12-29 08:01,2008-01-12 08:01,,PT_Normal,,,,,6iO+hasZQLGApVRdXaNiTw,lIteX5tTFEeiEpjsOxIf2h,,,N,0,0,,,2007-02-01 02:41,2007-02-04 01:00,hbe4678,hbe4678,2007-05-02 08:00,2007-05-15 17:00,96
950,12457131,14517,6815934,13329,1,0,N,N,N,CP_Units,TT_Task,DT_FixedDUR2,RV_OK,TK_Active,CO02EM0110,02E Set Static Equipment,,1016.01666666667,0,192,0,0,0,192,0,0,0,,2006-10-11 00:00,,2008-01-05 08:01,2008-02-02 08:01,,2007-07-12 08:00,2007-08-08 17:00,2007-07-12 08:00,2007-08-08 17:00,2007-04-28 08:00,2007-05-24 17:00,,2008-01-05 08:01,2008-02-02 08:01,,PT_Normal,,,,,2modBaHkTGWhpuCCnUK8CQ,7dkap1ktPE6kjQTUjWaKdh,,,N,0,0,,,2007-02-01 02:41,2007-02-04 01:00,hbe4678,hbe4678,2007-07-12 08:00,2007-08-08 17:00,192
951,12457132,14517,6815934,13329,1,0,N,N,N,CP_Units,TT_Task,DT_FixedDUR2,RV_OK,TK_NotStart,CO02FM0110,02F Set Static Equipment,,1928.01666666667,616,192,0,0,0,192,0,0,0,,,,2008-01-05 08:01,2008-02-02 08:01,,2007-03-01 08:00,2007-03-28 17:00,2007-03-01 08:00,2007-03-28 17:00,2007-03-01 08:00,2007-03-28 17:00,,2008-01-05 08:01,2008-02-02 08:01,,PT_Normal,,,,,h9Z3ykTPRG6Y+MDi1LACZQ,bCtBk5OWBUCqChVqPKepox,,,N,0,0,,,2007-02-01 02:41,2007-02-04 01:00,hbe4678,hbe4678,2007-03-01 08:00,2007-03-28 17:00,192
952,12457133,14517,6815934,13329,1,0,N,N,N,CP_Units,TT_Task,DT_FixedDUR2,RV_OK,TK_NotStart,CO02FM0150,02F Set Rotating Equipment,,1408.01666666667,0,192,0,0,0,192,0,0,0,,,,2008-01-05 08:01,2008-02-02 08:01,,2007-05-16 08:00,2007-06-12 17:00,2007-05-16 08:00,2007-06-12 17:00,2007-05-16 08:00,2007-06-12 17:00,,2008-01-05 08:01,2008-02-02 08:01,,PT_Normal,,,,,YrbX+TwVSMW2hgPQBWX+TQ,Kiqc+q4ZD026GomWU2xPrB,,,N,0,0,,,2007-02-01 02:41,2007-02-04 01:00,hbe4678,hbe4678,2007-05-16 08:00,2007-06-12 17:00,192
953,12457134,14517,6815934,13329,1,0,N,N,N,CP_Units,TT_Task,DT_FixedDUR2,RV_OK,TK_NotStart,CO02GM0110,02G Set Static Equipment - Gen'l,,1664.01666666667,824.016666666667,224,0,0,0,224,0,0,0,,,,2007-12-25 08:01,2008-01-27 08:01,,2007-03-29 08:00,2007-04-30 17:00,2007-03-29 08:00,2007-04-30 17:00,2007-03-29 08:00,2007-04-30 17:00,,2007-12-25 08:01,2008-01-27 08:01,,PT_Normal,,,,,9Bk/0sslRr2GqKaUJ1T8vA,zKof2npEC0eeopqo29hPJh,,,N,0,0,,,2007-02-01 02:41,2007-02-04 01:05,hbe4678,hbe4678,2007-03-29 08:00,2007-04-30 17:00,224
954,12457135,14517,6815934,13329,1,0,N,N,N,CP_Units,TT_Task,DT_FixedDUR2,RV_OK,TK_NotStart,CO02GM0150,02G Set Rotating Equipment,,1592.01666666667,752.016666666667,112,0,0,0,112,0,0,0,,,,2008-01-10 08:01,2008-01-27 08:01,,2007-04-25 08:00,2007-05-10 17:00,2007-04-25 08:00,2007-05-10 17:00,2007-04-25 08:00,2007-05-10 17:00,,2008-01-10 08:01,2008-01-27 08:01,,PT_Normal,,,,,dVhD6NLyTk+GaU2nWyrIsQ,cYWTwizLz0SPv+BGzhnhCx,,,N,0,0,,,2007-02-01 02:41,2007-02-04 01:05,hbe4678,hbe4678,2007-04-25 08:00,2007-05-10 17:00,112
955,12457136,14517,6815934,13329,1,0,N,N,N,CP_Units,TT_Task,DT_FixedDUR2,RV_OK,TK_NotStart,CO02GM0130,02G Install - 101-J/JT Air Compr. & Gen. Turb. & Aux.,,840,0,800,0,0,0,800,0,0,0,,,,2007-09-04 08:01,2008-01-27 08:01,,2007-05-05 08:01,2007-08-29 08:01,2007-05-05 08:01,2007-08-29 08:01,2007-05-05 08:01,2007-08-29 08:01,,2007-09-04 08:01,2008-01-27 08:01,,PT_Normal,,,,,78tojWVOS0CJINOo1dtXdw,2EpzND4SFk6p8KN2gvGdNB,,,N,0,0,,,2007-02-01 02:41,2007-02-01 02:43,hbe4678,hbe4678,2007-05-05 08:01,2007-08-29 08:01,800
956,12457137,14517,6815934,13329,1,0,N,N,N,CP_Units,TT_Task,DT_FixedDUR2,RV_OK,TK_NotStart,CO02GM0140,02G Set/Install - 102-J Fd Gas Compr. & Aux.,,1504.01666666667,504,800,0,0,0,800,0,0,0,,,,2007-09-03 08:01,2008-01-26 08:01,,2007-01-27 08:00,2007-05-22 17:00,2007-01-27 08:00,2007-05-22 17:00,2007-01-27 08:00,2007-05-22 17:00,,2007-09-03 08:01,2008-01-26 08:01,,PT_Normal,,,,,0ekBr3IoRLSV379G8+05Nw,Nxmus4L0T06nQMEh4O3tpB,,,N,0,0,,,2007-02-01 02:41,2007-02-04 01:05,hbe4678,hbe4678,2007-01-27 08:00,2007-05-22 17:00,800
957,12457138,14517,6815934,13329,1,0,N,N,N,CP_Units,TT_Task,DT_FixedDUR2,RV_OK,TK_Active,CO02JM0110,02J Set Static Equipment - Gen'l,,784.016666666667,0,80,0,0,0,80,0,0,0,,2006-12-09 00:00,,2007-11-14 08:01,2007-11-26 08:01,,2007-07-01 08:00,2007-07-11 17:00,2007-07-01 08:00,2007-07-11 17:00,2007-04-15 08:00,2007-04-25 17:00,,2007-11-14 08:01,2007-11-26 08:01,,PT_Normal,,,,,LlvwfyxVTSe/qwr/g1KuLw,AlfWE2BUHEqsD6UsgnyqlB,,,N,0,0,,,2007-02-01 02:41,2007-02-04 01:00,hbe4678,hbe4678,2007-07-01 08:00,2007-07-11 17:00,80
958,12457139,14517,6815934,13329,1,0,N,N,N,CP_Units,TT_Task,DT_FixedDUR2,RV_OK,TK_NotStart,CO02JM0130,02J Set (Heavy Lift) - 104-D2 (Low Temp Shift Converter),,448.016666666667,0,40,0,0,0,40,0,0,0,,,,2007-08-12 08:01,2007-08-18 08:01,,2007-06-07 08:00,2007-06-12 17:00,2007-06-07 08:00,2007-06-12 17:00,2007-06-07 08:00,2007-06-12 17:00,,2007-08-12 08:01,2007-08-18 08:01,,PT_Normal,,,,,PPBWtsyiT3yKJQ1Zxxk0Dw,4S16Dy+ni0S9pTttcNwWxR,,,N,0,0,,,2007-02-01 02:41,2007-02-04 01:00,hbe4678,hbe4678,2007-06-07 08:00,2007-06-12 17:00,40
959,12457140,14517,6815934,13329,1,0,N,N,N,CP_Units,TT_Task,DT_FixedDUR2,RV_OK,TK_NotStart,CO02JM0140,02J Set (Heavy Lift) - 104-D1 (High Temp Shift Converter),,448.016666666667,0,40,0,0,0,40,0,0,0,,,,2007-08-18 08:01,2007-08-23 08:01,,2007-06-13 08:00,2007-06-18 17:00,2007-06-13 08:00,2007-06-18 17:00,2007-06-13 08:00,2007-06-18 17:00,,2007-08-18 08:01,2007-08-23 08:01,,PT_Normal,,,,,kQ4gmTanRleNMnmCUSG3lg,UYXi3CD69k6/jwG8mPwGRh,,,N,0,0,,,2007-02-01 02:41,2007-02-04 01:00,hbe4678,hbe4678,2007-06-13 08:00,2007-06-18 17:00,40
960,12457141,14517,6815934,13329,1,0,N,N,N,CP_Units,TT_Task,DT_FixedDUR2,RV_OK,TK_Active,CO02KM0110,02K Set Static Equipment - Gen'l,,808,0,144,0,0,0,144,0,0,0,,2006-12-07 00:00,,2007-11-03 08:01,2007-11-24 08:01,,2007-06-16 08:01,2007-07-07 08:01,2007-06-16 08:01,2007-07-07 08:01,2007-06-09 08:01,2007-06-30 08:01,,2007-11-03 08:01,2007-11-24 08:01,,PT_Normal,,,,,2t9OKysiTAqKbZ+qpniAFA,huncwuPkikur1dypXoL5Qh,,,N,0,0,,,2007-02-01 02:41,2007-02-01 02:43,hbe4678,hbe4678,2007-06-16 08:01,2007-07-07 08:01,144
961,12457142,14517,6815934,13329,1,0,N,N,N,CP_Units,TT_Task,DT_FixedDUR2,RV_OK,TK_Active,CO02LM0110,02L Set Static Equipment - Gen'l,,824.016666666667,64,224,0,0,0,224,0,0,0,,2006-10-14 00:00,,2007-12-09 08:01,2008-01-16 08:01,,2007-07-19 08:00,2007-08-20 17:00,2007-07-19 08:00,2007-08-20 17:00,2007-06-30 08:00,2007-07-31 17:00,,2007-12-09 08:01,2008-01-16 08:01,,PT_Normal,,,,,ahD1XpriRRydjvWSyPy5TQ,,,,N,0,0,,,2007-02-01 02:41,2007-02-04 01:00,hbe4678,hbe4678,2007-07-19 08:00,2007-08-20 17:00,224
962,12457143,14517,6815934,13329,1,0,N,N,N,CP_Units,TT_Task,DT_FixedDUR2,RV_OK,TK_NotStart,CO02LM0120,02L Set Static Equipment - 02L Structure,,-119.983333333333,0,288,0,0,0,288,0,0,0,,,,2007-07-02 08:01,2007-08-13 08:01,,2007-07-19 08:00,2007-08-29 17:00,2007-07-19 08:00,2007-08-29 17:00,2007-07-19 08:00,2007-08-29 17:00,,2007-07-02 08:01,2007-08-13 08:01,,PT_Normal,,,,,/qCNXv7xQdGOAPYjrjNDIA,,,,N,0,0,,,2007-02-01 02:41,2007-02-04 01:00,hbe4678,hbe4678,2007-07-19 08:00,2007-08-29 17:00,288
963,12457144,14517,6815934,13329,1,0,N,N,N,CP_Units,TT_Task,DT_FixedDUR2,RV_OK,TK_NotStart,CO02LM0150,02L Set Rotating Equipment,,1360.01666666667,648,224,0,0,0,224,0,0,0,,,,2007-12-02 08:01,2008-01-09 08:01,,2007-04-25 08:00,2007-05-27 17:00,2007-04-25 08:00,2007-05-27 17:00,2007-04-25 08:00,2007-05-27 17:00,,2007-12-02 08:01,2008-01-09 08:01,,PT_Normal,,,,,Gt8sqEwlSs+D3ZDBLD8c1g,,,,N,0,0,,,2007-02-01 02:41,2007-02-04 01:00,hbe4678,hbe4678,2007-04-25 08:00,2007-05-27 17:00,224
964,12457145,14517,6815934,13329,1,0,N,N,N,CP_Units,TT_Task,DT_FixedDUR2,RV_OK,TK_NotStart,CO02LM0130,02L Set (Heavy Lift) - 101-E (CO2 Absorber),,448.016666666667,0,40,0,0,0,40,0,0,0,,,,2007-08-23 08:01,2007-08-29 08:01,,2007-06-19 08:00,2007-06-24 17:00,2007-06-19 08:00,2007-06-24 17:00,2007-06-19 08:00,2007-06-24 17:00,,2007-08-23 08:01,2007-08-29 08:01,,PT_Normal,,,,,XE2f2YxmQn6HsxAopXtIcg,,,,N,0,0,,,2007-02-01 02:41,2007-02-04 01:00,hbe4678,hbe4678,2007-06-19 08:00,2007-06-24 17:00,40
965,12457146,14517,6815934,13329,1,0,N,N,N,CP_Units,TT_Task,DT_FixedDUR2,RV_OK,TK_NotStart,CO02LM0140,02L Set (Heavy Lift) - 102-E (CO2 Stripper),,448.016666666667,0,40,0,0,0,40,0,0,0,,,,2007-08-29 08:01,2007-09-04 08:01,,2007-06-25 08:00,2007-06-30 17:00,2007-06-25 08:00,2007-06-30 17:00,2007-06-25 08:00,2007-06-30 17:00,,2007-08-29 08:01,2007-09-04 08:01,,PT_Normal,,,,,XoGl+J3DRO+2S/RRVARTBQ,,,,N,0,0,,,2007-02-01 02:41,2007-02-04 01:00,hbe4678,hbe4678,2007-06-25 08:00,2007-06-30 17:00,40
966,12457147,14517,6815934,13329,1,0,N,N,N,CP_Units,TT_Task,DT_FixedDUR2,RV_OK,TK_NotStart,CO02HM0246,02H Install Radiant Sect Coils (101-B),,1208.01666666667,0,192,0,0,0,192,0,0,0,,,,2007-11-05 08:01,2007-12-03 08:01,,2007-04-21 08:00,2007-05-17 17:00,2007-04-21 08:00,2007-05-17 17:00,2007-04-21 08:00,2007-05-17 17:00,,2007-11-05 08:01,2007-12-03 08:01,,PT_Normal,,,,,x4BxQyo5RH6QwUOplmzK1Q,,,,N,0,0,,,2007-02-01 02:41,2007-02-04 01:00,hbe4678,hbe4678,2007-04-21 08:00,2007-05-17 17:00,192
967,12457148,14517,6815934,13329,1,0,N,N,N,CP_Units,TT_Task,DT_FixedDUR2,RV_OK,TK_NotStart,CO02HM0250,02H Set Forced Draft Fan (101-B),,1872,0,192,0,0,0,192,0,0,0,,,,2008-02-09 08:01,2008-03-08 08:01,,2007-04-14 08:01,2007-05-12 08:01,2007-04-14 08:01,2007-05-12 08:01,2007-04-14 08:01,2007-05-12 08:01,,2008-02-09 08:01,2008-03-08 08:01,,PT_Normal,,,,,vRA0VoVER9aSXqdI0vNxbQ,,,,N,0,0,,,2007-02-01 02:41,2007-02-01 02:43,hbe4678,hbe4678,2007-04-14 08:01,2007-05-12 08:01,192
968,12457149,14517,6815934,13329,1,0,N,N,N,CP_Units,TT_Task,DT_FixedDUR2,RV_OK,TK_NotStart,CO02HM0255,02H Set Induced Draft Fan (101-B),,1872,87.9833333333333,192,0,0,0,192,0,0,0,,,,2008-02-16 08:01,2008-03-15 08:01,,2007-04-21 08:01,2007-05-19 08:01,2007-04-21 08:01,2007-05-19 08:01,2007-04-21 08:01,2007-05-19 08:01,,2008-02-16 08:01,2008-03-15 08:01,,PT_Normal,,,,,z+wYMf9MSeKPoLQjCfWJpw,,,,N,0,0,,,2007-02-01 02:41,2007-02-04 01:00,hbe4678,hbe4678,2007-04-21 08:01,2007-05-19 08:01,192
969,12457150,14517,6815934,13329,1,0,N,N,N,CP_Units,TT_Task,DT_FixedDUR2,RV_OK,TK_NotStart,CO02HM0260,02H Compete Installation of Ducts (101-B),,1400.01666666667,8,384,0,0,0,384,0,0,0,,,,2008-02-16 08:01,2008-04-12 08:01,,2007-06-28 08:00,2007-08-22 17:00,2007-06-28 08:00,2007-08-22 17:00,2007-06-28 08:00,2007-08-22 17:00,,2008-02-16 08:01,2008-04-12 08:01,,PT_Normal,,,,,r/e4bsK0RKKk9ONz3ttjDg,,,,N,0,0,,,2007-02-01 02:41,2007-02-04 01:00,hbe4678,hbe4678,2007-06-28 08:00,2007-08-22 17:00,384
970,12457151,14517,6815934,13329,0,0,N,N,N,CP_Units,TT_FinMile,DT_FixedDUR2,RV_OK,TK_NotStart,CO02HM0275,02H Complete Primary Reformer Erection (101-B),,1392.01666666667,0,0,0,0,0,0,0,0,0,,,,2008-04-12 08:01,2008-04-12 08:01,,2007-08-23 17:00,2007-08-23 17:00,2007-08-23 17:00,2007-08-23 17:00,2007-08-23 17:00,2007-08-23 17:00,,2008-04-12 08:01,2008-04-12 08:01,,PT_Normal,,,,,HHevT2y1QiqsRguHAnV0Uw,,,,N,0,0,,,2007-02-01 02:41,2007-02-04 01:00,hbe4678,hbe4678,2007-08-23 17:00,2007-08-23 17:00,0
971,12457152,14517,6815934,13329,1,0,N,N,N,CP_Units,TT_Task,DT_FixedDUR2,RV_OK,TK_NotStart,CO02HM0248,02H Install Effluent Transfer Line (107-D),,1208.01666666667,0,96,0,0,0,96,0,0,0,,,,2007-12-03 08:01,2007-12-17 08:01,,2007-05-19 08:00,2007-05-31 17:00,2007-05-19 08:00,2007-05-31 17:00,2007-05-19 08:00,2007-05-31 17:00,,2007-12-03 08:01,2007-12-17 08:01,,PT_Normal,,,,,JQo4QtHyTn6jIsn+ZHCwqw,,,,N,0,0,,,2007-02-01 02:41,2007-02-04 01:00,hbe4678,hbe4678,2007-05-19 08:00,2007-05-31 17:00,96
972,12457153,14517,6815934,13329,0,0,N,N,N,CP_Units,TT_Mile,DT_FixedDUR2,RV_OK,TK_NotStart,CO02HM0200,02H Start Primary Reformer Erection (101-B),,864.016666666667,0,0,0,0,0,0,0,0,0,2007-02-01 08:00,,,2007-06-07 08:01,2007-06-07 08:01,,2007-02-01 08:00,2007-02-01 08:00,2007-02-01 08:00,2007-02-01 08:00,2007-02-01 08:00,2007-02-01 08:00,,2007-06-07 08:01,2007-06-07 08:01,CS_MSOA,PT_Normal,,,,,+kHygfEqSZ+vKGjLEvFCiw,,,,N,0,0,,,2007-02-01 02:41,2007-02-04 01:00,hbe4678,hbe4678,2007-02-01 08:00,2007-02-01 08:00,0
973,12457154,14517,6815934,13329,1,0,N,N,N,CP_Units,TT_Task,DT_FixedDUR2,RV_OK,TK_NotStart,CO02HM0210,02H Erect Radiant Section Shell (101-B),,864.016666666667,0,624,0,0,0,624,0,0,0,,,,2007-06-07 08:01,2007-09-06 08:01,,2007-02-01 08:00,2007-05-02 17:00,2007-02-01 08:00,2007-05-02 17:00,2007-02-01 08:00,2007-05-02 17:00,,2007-06-07 08:01,2007-09-06 08:01,,PT_Normal,,,,,WackiO2pTze+li9cNsIEFA,,,,N,0,0,,,2007-02-01 02:41,2007-02-04 01:00,hbe4678,hbe4678,2007-02-01 08:00,2007-05-02 17:00,624
974,12457155,14517,6815934,13329,1,0,N,N,N,CP_Units,TT_Task,DT_FixedDUR2,RV_OK,TK_NotStart,CO02HM0215,02H Erect Fuel Gas Lines (101-B),,1208.01666666667,192,192,0,0,0,192,0,0,0,,,,2008-01-20 08:01,2008-02-17 08:01,,2007-06-30 08:00,2007-07-26 17:00,2007-06-30 08:00,2007-07-26 17:00,2007-06-30 08:00,2007-07-26 17:00,,2008-01-20 08:01,2008-02-17 08:01,,PT_Normal,,,,,Xio4gGFKSbC5yGKLTNow0A,,,,N,0,0,,,2007-02-01 02:41,2007-02-04 01:00,hbe4678,hbe4678,2007-06-30 08:00,2007-07-26 17:00,192
975,12457156,14517,6815934,13329,1,0,N,N,N,CP_Units,TT_Task,DT_FixedDUR2,RV_OK,TK_NotStart,CO02HM0220,02H Erect Radiant Ducting / Burners (101-B),,1208.01666666667,0,192,0,0,0,192,0,0,0,,,,2007-09-19 08:01,2007-11-05 08:01,,2007-03-24 08:00,2007-04-19 17:00,2007-03-24 08:00,2007-04-19 17:00,2007-03-24 08:00,2007-04-19 17:00,,2007-09-19 08:01,2007-11-05 08:01,,PT_Normal,,,,,yvlzzonGS32jAehy4UuJqQ,,,,N,0,0,,,2007-02-01 02:41,2007-02-04 01:00,hbe4678,hbe4678,2007-03-24 08:00,2007-04-19 17:00,192
976,12457157,14517,6815934,13329,1,0,N,N,N,CP_Units,TT_Task,DT_FixedDUR2,RV_OK,TK_NotStart,CO02HM0225,"02H Erect Penthouse Roof, & Siding (101-B)",,1208.01666666667,0,192,0,0,0,192,0,0,0,,,,2007-12-17 08:01,2008-01-20 08:01,,2007-06-02 08:00,2007-06-28 17:00,2007-06-02 08:00,2007-06-28 17:00,2007-06-02 08:00,2007-06-28 17:00,,2007-12-17 08:01,2008-01-20 08:01,,PT_Normal,,,,,+2dtOHpQTWugmyEHPgaUxA,,,,N,0,0,,,2007-02-01 02:41,2007-02-04 01:00,hbe4678,hbe4678,2007-06-02 08:00,2007-06-28 17:00,192
977,12457158,14517,6815935,13329,1,0,N,N,N,CP_Units,TT_Task,DT_FixedDUR2,RV_OK,TK_NotStart,CO02HP0150,02H Punchlist / Test Piping,,80.0166666666667,0,440,0,0,0,440,0,0,0,,,,2007-12-29 08:01,2008-03-02 08:01,,2007-12-11 08:00,2008-02-18 17:00,2007-12-11 08:00,2008-02-18 17:00,2007-12-11 08:00,2008-02-18 17:00,,2007-12-29 08:01,2008-03-02 08:01,,PT_Normal,,,,,KBI2iatoTeS4kXiiMh4+4A,B7kvnBS810uYrWPrSk/qaR,,,N,0,0,,,2007-02-01 02:41,2007-02-04 01:00,hbe4678,hbe4678,2007-12-11 08:00,2008-02-18 17:00,440
978,12457159,14517,6815935,13329,1,0,N,N,N,CP_Units,TT_Task,DT_FixedDUR2,RV_OK,TK_NotStart,CO02CP0130,02C LB Pipe Erection,,664.016666666667,0,904,0,0,0,904,0,0,0,,,,2007-09-12 08:01,2008-02-19 08:01,,2007-06-07 08:00,2007-11-07 17:00,2007-06-07 08:00,2007-11-07 17:00,2007-06-07 08:00,2007-11-07 17:00,,2007-09-12 08:01,2008-02-19 08:01,,PT_Normal,,,,,2UUtD2huQlaBHkFZLLrZLw,p5esPpHkpEex2rNIXimpIR,,,N,0,0,,,2007-02-01 02:41,2007-02-04 01:00,hbe4678,hbe4678,2007-06-07 08:00,2007-11-07 17:00,904
979,12457160,14517,6815935,13329,1,0,N,N,N,CP_Units,TT_Task,DT_FixedDUR2,RV_OK,TK_NotStart,CO02CP0140,02C SB Pipe Erection,,664.016666666667,0,904,0,0,0,904,0,0,0,,,,2007-09-26 08:01,2008-02-26 08:01,,2007-06-14 08:00,2007-11-14 17:00,2007-06-14 08:00,2007-11-14 17:00,2007-06-14 08:00,2007-11-14 17:00,,2007-09-26 08:01,2008-02-26 08:01,,PT_Normal,,,,,HtrSKNFtQVi1o0xBrDlpfA,p9iAKWpmpUehegYc1RCNHR,,,N,0,0,,,2007-02-01 02:41,2007-02-04 01:00,hbe4678,hbe4678,2007-06-14 08:00,2007-11-14 17:00,904
980,12457161,14517,6815935,13329,1,0,N,N,N,CP_Units,TT_Task,DT_FixedDUR2,RV_OK,TK_NotStart,CO02CP0150,02C Punchlist / Test Piping,,664.016666666667,0,448,0,0,0,448,0,0,0,,,,2007-12-30 08:01,2008-03-04 08:01,,2007-08-27 08:00,2007-11-21 17:00,2007-08-27 08:00,2007-11-21 17:00,2007-08-27 08:00,2007-11-21 17:00,,2007-12-30 08:01,2008-03-04 08:01,,PT_Normal,,,,,LWwImHh4RdKwxlB6yQxlbA,T6DWTB/Dk0qIG9aBbLbqhB,,,N,0,0,,,2007-02-01 02:41,2007-02-04 01:00,hbe4678,hbe4678,2007-08-27 08:00,2007-11-21 17:00,448
981,12457162,14517,6815935,13329,1,0,N,N,N,CP_Units,TT_Task,DT_FixedDUR2,RV_OK,TK_NotStart,CO02HP0130,02H LB Pipe Erection,,80.0166666666667,0,928,0,0,0,928,0,0,0,,,,2007-09-06 08:01,2008-02-17 08:01,,2007-08-26 08:00,2008-02-04 17:00,2007-08-26 08:00,2008-02-04 17:00,2007-08-26 08:00,2008-02-04 17:00,,2007-09-06 08:01,2008-02-17 08:01,,PT_Normal,,,,,F1Vq3FmbS/eQMUqxkR8Pfg,ZW88zEj3aUuMOtRgFyGXOx,,,N,0,0,,,2007-02-01 02:41,2007-02-04 01:00,hbe4678,hbe4678,2007-08-26 08:00,2008-02-04 17:00,928
982,12457163,14517,6815935,13329,1,0,N,N,N,CP_Units,TT_Task,DT_FixedDUR2,RV_OK,TK_NotStart,CO02JP0140,02J SB Pipe Erection,,784.016666666667,0,584,0,0,0,584,0,0,0,,,,2007-12-03 08:01,2008-03-03 08:01,,2007-07-19 08:00,2007-11-03 17:00,2007-07-19 08:00,2007-11-03 17:00,2007-07-19 08:00,2007-11-03 17:00,,2007-12-03 08:01,2008-03-03 08:01,,PT_Normal,,,,,Mf07K41NQ2+EU5zmPk868Q,Unkcm/Ho2kGI7p/zSbFVfh,,,N,0,0,,,2007-02-01 02:41,2007-02-04 01:00,hbe4678,hbe4678,2007-07-19 08:00,2007-11-03 17:00,584
983,12457164,14517,6815935,13329,1,0,N,N,N,CP_Units,TT_Task,DT_FixedDUR2,RV_OK,TK_NotStart,CO02JP0150,02J Punchlist / Test Piping,,816.016666666667,0,288,0,0,0,288,0,0,0,,,,2008-02-02 08:01,2008-03-15 08:01,,2007-09-08 08:00,2007-11-10 17:00,2007-09-08 08:00,2007-11-10 17:00,2007-09-08 08:00,2007-11-10 17:00,,2008-02-02 08:01,2008-03-15 08:01,,PT_Normal,,,,,2UrfUSpJQO2EcF6UqJj1aA,qivrA1G2SEGt35xicORlZh,,,N,0,0,,,2007-02-01 02:41,2007-02-04 01:00,hbe4678,hbe4678,2007-09-08 08:00,2007-11-10 17:00,288
984,12457165,14517,6815935,13329,1,0,N,N,N,CP_Units,TT_Task,DT_FixedDUR2,RV_OK,TK_NotStart,CO02KP0130,02K LB Pipe Erection,,616,0,560,0,0,0,560,0,0,0,2007-08-11 08:01,,,2007-12-01 08:01,2008-02-26 08:01,,2007-08-11 08:01,2007-11-22 08:01,2007-08-11 08:01,2007-11-22 08:01,2007-08-11 08:01,2007-11-22 08:01,,2007-12-01 08:01,2008-02-26 08:01,CS_MSOA,PT_Normal,,,,,65E6xnd1SvK+nIq3VNTTNA,6GQpbW44v0Ki+EmQRPRXmh,,,N,0,0,,,2007-02-01 02:41,2007-02-01 02:43,hbe4678,hbe4678,2007-08-11 08:01,2007-11-22 08:01,560
985,12457166,14517,6815935,13329,1,0,N,N,N,CP_Units,TT_Task,DT_FixedDUR2,RV_OK,TK_NotStart,CO02KP0140,02K SB Pipe Erection,,616,0,560,0,0,0,560,0,0,0,,,,2007-12-08 08:01,2008-03-04 08:01,,2007-08-18 08:01,2007-11-29 08:01,2007-08-18 08:01,2007-11-29 08:01,2007-08-18 08:01,2007-11-29 08:01,,2007-12-08 08:01,2008-03-04 08:01,,PT_Normal,,,,,phAZVM6mQC6iafW+BDiw5w,cbeq4oIVS0mK8QgU4HwTuB,,,N,0,0,,,2007-02-01 02:41,2007-02-01 02:43,hbe4678,hbe4678,2007-08-18 08:01,2007-11-29 08:01,560
986,12457167,14517,6815935,13329,1,0,N,N,N,CP_Units,TT_Task,DT_FixedDUR2,RV_OK,TK_NotStart,CO02KP0150,02K Punchlist / Test Piping,,640,0,280,0,0,0,280,0,0,0,,,,2008-02-03 08:01,2008-03-15 08:01,,2007-10-27 08:01,2007-12-06 08:01,2007-10-27 08:01,2007-12-06 08:01,2007-10-27 08:01,2007-12-06 08:01,,2008-02-03 08:01,2008-03-15 08:01,,PT_Normal,,,,,JJc0lu45R6S0Qju27iFbqg,N+1QYL2EiUaU+IU9Tq+tTB,,,N,0,0,,,2007-02-01 02:41,2007-02-01 02:43,hbe4678,hbe4678,2007-10-27 08:01,2007-12-06 08:01,280
987,12457168,14517,6815935,13329,1,0,N,N,N,CP_Units,TT_Task,DT_FixedDUR2,RV_OK,TK_NotStart,CO02MP0130,02M LB Pipe Erection,,736.016666666667,0,560,0,0,0,560,0,0,0,2007-07-28 08:00,,,2007-12-04 08:01,2008-03-01 08:01,,2007-07-28 08:00,2007-11-07 17:00,2007-07-28 08:00,2007-11-07 17:00,2007-07-28 08:00,2007-11-07 17:00,,2007-12-04 08:01,2008-03-01 08:01,CS_MSOA,PT_Normal,,,,,XrBI/PZrSkyhYAB1+dAcDg,RLiO4FfZBka+c9wtpdnhxh,,,N,0,0,,,2007-02-01 02:41,2007-02-04 01:00,hbe4678,hbe4678,2007-07-28 08:00,2007-11-07 17:00,560
988,12457169,14517,6815935,13329,1,0,N,N,N,CP_Units,TT_Task,DT_FixedDUR2,RV_OK,TK_NotStart,CO02MP0140,02M SB Pipe Erection,,736.016666666667,0,408,0,0,0,408,0,0,0,,,,2008-01-08 08:01,2008-03-08 08:01,,2007-08-26 08:00,2007-11-14 17:00,2007-08-26 08:00,2007-11-14 17:00,2007-08-26 08:00,2007-11-14 17:00,,2008-01-08 08:01,2008-03-08 08:01,,PT_Normal,,,,,Mbh5cH+6SreWUWdHvczj1g,RvquYLRjwUevHsUGXDJfah,,,N,0,0,,,2007-02-01 02:41,2007-02-04 01:00,hbe4678,hbe4678,2007-08-26 08:00,2007-11-14 17:00,408
989,12457170,14517,6815935,13329,1,0,N,N,N,CP_Units,TT_Task,DT_FixedDUR2,RV_OK,TK_NotStart,CO02MP0150,02M Punchlist / Test Piping,,736.016666666667,0,200,0,0,0,200,0,0,0,,,,2008-02-14 08:01,2008-03-15 08:01,,2007-10-24 08:00,2007-11-21 17:00,2007-10-24 08:00,2007-11-21 17:00,2007-10-24 08:00,2007-11-21 17:00,,2008-02-14 08:01,2008-03-15 08:01,,PT_Normal,,,,,ZCweeIxxRUmHMzZuCIsP2g,WSz3wLw36kWT/dCpiy2TYB,,,N,0,0,,,2007-02-01 02:41,2007-02-04 01:00,hbe4678,hbe4678,2007-10-24 08:00,2007-11-21 17:00,200
990,12457171,14517,6815935,13329,1,0,N,N,N,CP_Units,TT_Task,DT_FixedDUR2,RV_OK,TK_NotStart,CO02NP0130,02N LB Pipe Erection,,448.016666666667,0,800,0,0,0,800,0,0,0,,,,2007-10-21 08:01,2008-02-20 08:01,,2007-07-25 08:00,2007-12-10 17:00,2007-07-25 08:00,2007-12-10 17:00,2007-07-25 08:00,2007-12-10 17:00,,2007-10-21 08:01,2008-02-20 08:01,,PT_Normal,,,,,K0YQY6FEQGi1nVuzUN3ihg,eoKxnL8OAU6WuNEoPPwfCB,,,N,0,0,,,2007-02-01 02:41,2007-02-04 01:00,hbe4678,hbe4678,2007-07-25 08:00,2007-12-10 17:00,800
991,12457172,14517,6815935,13329,1,0,N,N,N,CP_Units,TT_Task,DT_FixedDUR2,RV_OK,TK_NotStart,CO02NP0140,02N SB Pipe Erection,,448.016666666667,0,72,0,0,0,72,0,0,0,,,,2008-02-17 08:01,2008-02-27 08:01,,2007-12-08 08:00,2007-12-17 17:00,2007-12-08 08:00,2007-12-17 17:00,2007-12-08 08:00,2007-12-17 17:00,,2008-02-17 08:01,2008-02-27 08:01,,PT_Normal,,,,,TKaBNdjGT1GvLlry01JoHg,XCysUF5cJUGMtKyo8nGFPB,,,N,0,0,,,2007-02-01 02:41,2007-02-04 01:00,hbe4678,hbe4678,2007-12-08 08:00,2007-12-17 17:00,72
992,12457173,14517,6815935,13329,1,0,N,N,N,CP_Units,TT_Task,DT_FixedDUR2,RV_OK,TK_NotStart,CO02NP0150,02N Punchlist / Test Piping,,448.016666666667,0,32,0,0,0,32,0,0,0,,,,2008-03-01 08:01,2008-03-05 08:01,,2007-12-26 08:00,2007-12-30 17:00,2007-12-26 08:00,2007-12-30 17:00,2007-12-26 08:00,2007-12-30 17:00,,2008-03-01 08:01,2008-03-05 08:01,,PT_Normal,,,,,UB8/Gtw3TvqTqPVFANfMlQ,pZw42xvARkKcRWv1KoNF+R,,,N,0,0,,,2007-02-01 02:41,2007-02-04 01:00,hbe4678,hbe4678,2007-12-26 08:00,2007-12-30 17:00,32
993,12457174,14517,6815935,13329,1,0,N,N,N,CP_Units,TT_Task,DT_FixedDUR2,RV_OK,TK_NotStart,CO02PP0130,02P LB Pipe Erection,,824.016666666667,0,384,0,0,0,384,0,0,0,,,,2007-12-31 08:01,2008-02-25 08:01,,2007-08-05 08:00,2007-10-21 17:00,2007-08-05 08:00,2007-10-21 17:00,2007-08-05 08:00,2007-10-21 17:00,,2007-12-31 08:01,2008-02-25 08:01,,PT_Normal,,,,,I4a4w4AnTC6qfAo1M2jTAw,MWntMloMvUujrIM9z7flux,,,N,0,0,,,2007-02-01 02:41,2007-02-04 01:00,hbe4678,hbe4678,2007-08-05 08:00,2007-10-21 17:00,384
994,12457175,14517,6815935,13329,1,0,N,N,N,CP_Units,TT_Task,DT_FixedDUR2,RV_OK,TK_NotStart,CO02PP0140,02P SB Pipe Erection,,824.016666666667,0,112,0,0,0,112,0,0,0,,,,2008-02-16 08:01,2008-03-03 08:01,,2007-09-29 08:00,2007-10-28 17:00,2007-09-29 08:00,2007-10-28 17:00,2007-09-29 08:00,2007-10-28 17:00,,2008-02-16 08:01,2008-03-03 08:01,,PT_Normal,,,,,p9HbWMzdTT6QVYuHrmXdSA,uFzzbZz+gESOaKN6xN8TWx,,,N,0,0,,,2007-02-01 02:41,2007-02-04 01:00,hbe4678,hbe4678,2007-09-29 08:00,2007-10-28 17:00,112
995,12457176,14517,6815935,13329,1,0,N,N,N,CP_Units,TT_Task,DT_FixedDUR2,RV_OK,TK_NotStart,CO02PP0150,02P Punchlist / Test Piping,,856.016666666667,0,56,0,0,0,56,0,0,0,,,,2008-03-06 08:01,2008-03-15 08:01,,2007-10-28 08:00,2007-11-04 17:00,2007-10-28 08:00,2007-11-04 17:00,2007-10-28 08:00,2007-11-04 17:00,,2008-03-06 08:01,2008-03-15 08:01,,PT_Normal,,,,,Ds8gt9bXSrOqgkIsJCZowA,Gs92thh4+Eigv+aN4lKVXx,,,N,0,0,,,2007-02-01 02:41,2007-02-04 01:00,hbe4678,hbe4678,2007-10-28 08:00,2007-11-04 17:00,56
996,12457177,14517,6815935,13329,1,0,N,N,N,CP_Units,TT_Task,DT_FixedDUR2,RV_OK,TK_NotStart,CO02QP0130,02Q LB Pipe Erection,,808.016666666667,0,480,0,0,0,480,0,0,0,,,,2007-12-16 08:01,2008-03-01 08:01,,2007-07-29 08:00,2007-10-28 17:00,2007-07-29 08:00,2007-10-28 17:00,2007-07-29 08:00,2007-10-28 17:00,,2007-12-16 08:01,2008-03-01 08:01,,PT_Normal,,,,,JKsArNrGQMOX8KoY2HCvUw,vBCSiKrDp0qL9N7IKo44ah,,,N,0,0,,,2007-02-01 02:41,2007-02-04 01:00,hbe4678,hbe4678,2007-07-29 08:00,2007-10-28 17:00,480
997,12457178,14517,6815935,13329,1,0,N,N,N,CP_Units,TT_Task,DT_FixedDUR2,RV_OK,TK_NotStart,CO02QP0140,02Q SB Pipe Erection,,808.016666666667,0,112,0,0,0,112,0,0,0,,,,2008-02-20 08:01,2008-03-08 08:01,,2007-10-20 08:00,2007-11-04 17:00,2007-10-20 08:00,2007-11-04 17:00,2007-10-20 08:00,2007-11-04 17:00,,2008-02-20 08:01,2008-03-08 08:01,,PT_Normal,,,,,plc6+3teQC6qc0miyPrHvw,Ak58JQrVfUGjwNyoQC2WEh,,,N,0,0,,,2007-02-01 02:41,2007-02-04 01:00,hbe4678,hbe4678,2007-10-20 08:00,2007-11-04 17:00,112
998,12457179,14517,6815935,13329,1,0,N,N,N,CP_Units,TT_Task,DT_FixedDUR2,RV_OK,TK_NotStart,CO02QP0150,02Q Punchlist / Test Piping,,808.016666666667,0,56,0,0,0,56,0,0,0,,,,2008-03-06 08:01,2008-03-15 08:01,,2007-11-04 08:00,2007-11-11 17:00,2007-11-04 08:00,2007-11-11 17:00,2007-11-04 08:00,2007-11-11 17:00,,2008-03-06 08:01,2008-03-15 08:01,,PT_Normal,,,,,PbwCbTw8TLuRs57PwoaYoQ,7m/NYDHaWEeuYLY0G/Whex,,,N,0,0,,,2007-02-01 02:41,2007-02-04 01:00,hbe4678,hbe4678,2007-11-04 08:00,2007-11-11 17:00,56
999,12457180,14517,6815935,13329,1,0,N,N,N,CP_Units,TT_Task,DT_FixedDUR2,RV_OK,TK_NotStart,CO02YP0130,02Y LB Pipe Erection,,-280,0,1056,0,0,0,1056,0,0,0,,,,2007-04-02 08:00,2007-09-02 17:00,,2007-05-13 08:00,2007-11-04 17:00,2007-05-13 08:00,2007-11-04 17:00,2007-05-13 08:00,2007-11-04 17:00,,2007-04-02 08:00,2007-09-02 17:00,,PT_Normal,,,,,LIvo1LPNQRGdjrIkJHZ0Jw,OK8QN2v9QUKbsihoUxf0tR,,,N,0,0,,,2007-02-01 02:41,2007-02-01 02:43,hbe4678,hbe4678,2007-05-13 08:00,2007-11-04 17:00,1056
1000,12457181,14517,6815935,13329,1,0,N,N,N,CP_Units,TT_Task,DT_FixedDUR2,RV_OK,TK_NotStart,CO02YP0140,02Y SB Pipe Erection,,-232,0,1056,0,0,0,1056,0,0,0,,,,2007-05-07 08:00,2007-10-29 17:00,,2007-06-10 08:00,2007-12-02 17:00,2007-06-10 08:00,2007-12-02 17:00,2007-06-10 08:00,2007-12-02 17:00,,2007-05-07 08:00,2007-10-29 17:00,,PT_Normal,,,,,3WrQ3NnqQwOQWfzvuSnG+A,c/WAff8c+kyngi+r6JEqQx,,,N,0,0,,,2007-02-01 02:41,2007-02-01 02:43,hbe4678,hbe4678,2007-06-10 08:00,2007-12-02 17:00,1056
1001,12457182,14517,6815935,13329,1,0,N,N,N,CP_Units,TT_Task,DT_FixedDUR2,RV_OK,TK_NotStart,CO02YP0150,02Y Punchlist / Test Piping,,520.016666666667,0,480,0,0,0,480,0,0,0,,,,2007-12-16 08:01,2008-03-01 08:01,,2007-09-09 08:00,2007-12-09 17:00,2007-09-09 08:00,2007-12-09 17:00,2007-09-09 08:00,2007-12-09 17:00,,2007-12-16 08:01,2008-03-01 08:01,,PT_Normal,,,,,iiLS2odgS8SMoVqn5EauhQ,MMzHMSx2eESKRZFdq1W3GB,,,N,0,0,,,2007-02-01 02:41,2007-02-04 01:00,hbe4678,hbe4678,2007-09-09 08:00,2007-12-09 17:00,480
1002,12457183,14517,6815935,13329,1,0,N,N,N,CP_Units,TT_Task,DT_FixedDUR2,RV_OK,TK_NotStart,CO02HP0140,02H SB Pipe Erection,,80.0166666666667,0,928,0,0,0,928,0,0,0,,,,2007-09-15 08:01,2008-02-24 08:01,,2007-09-02 08:00,2008-02-11 17:00,2007-09-02 08:00,2008-02-11 17:00,2007-09-02 08:00,2008-02-11 17:00,,2007-09-15 08:01,2008-02-24 08:01,,PT_Normal,,,,,5JOMKTrISPuRugwM+hfzzg,LXsJ/dERrkGYVixuQkTCsR,,,N,0,0,,,2007-02-01 02:41,2007-02-04 01:00,hbe4678,hbe4678,2007-09-02 08:00,2008-02-11 17:00,928
1003,12457184,14517,6815935,13329,1,0,N,N,N,CP_Units,TT_Task,DT_FixedDUR2,RV_OK,TK_NotStart,CO02LP0150,02L Punchlist / Test Piping,,-119.983333333333,0,584,0,0,0,584,0,0,0,,,,2007-11-28 08:01,2008-02-27 08:01,,2007-12-16 08:00,2008-03-15 17:00,2007-12-16 08:00,2008-03-15 17:00,2007-12-16 08:00,2008-03-15 17:00,,2007-11-28 08:01,2008-02-27 08:01,,PT_Normal,,,,,XQYN6JXwSvGw6nNMEWCPjg,,,,N,0,0,,,2007-02-01 02:41,2007-02-04 01:00,hbe4678,hbe4678,2007-12-16 08:00,2008-03-15 17:00,584
1004,12457185,14517,6815935,13329,1,0,N,N,N,CP_Units,TT_Task,DT_FixedDUR2,RV_OK,TK_NotStart,CO02AP0130,02A LB Pipe Erection,,624.016666666667,0,520,0,0,0,520,0,0,0,2007-08-18 08:00,,,2007-12-09 08:01,2008-02-28 08:01,,2007-08-18 08:00,2007-11-22 17:00,2007-08-18 08:00,2007-11-22 17:00,2007-08-18 08:00,2007-11-22 17:00,,2007-12-09 08:01,2008-02-28 08:01,CS_MSOA,PT_Normal,,,,,0JOUl0tqQv2VccYKXdorzQ,p5esPpHkpEex2rNIXimpIR,,,N,0,0,,,2007-02-01 02:41,2007-02-04 01:00,hbe4678,hbe4678,2007-08-18 08:00,2007-11-22 17:00,520
1005,12457186,14517,6815935,13329,1,0,N,N,N,CP_Units,TT_Task,DT_FixedDUR2,RV_OK,TK_NotStart,CO02AP0140,02A SB Pipe Erection,,624.016666666667,0,520,0,0,0,520,0,0,0,,,,2007-12-16 08:01,2008-03-06 08:01,,2007-08-25 08:00,2007-11-29 17:00,2007-08-25 08:00,2007-11-29 17:00,2007-08-25 08:00,2007-11-29 17:00,,2007-12-16 08:01,2008-03-06 08:01,,PT_Normal,,,,,ZmLCfQ5SQU2U3T3krvekzw,p9iAKWpmpUehegYc1RCNHR,,,N,0,0,,,2007-02-01 02:41,2007-02-04 01:00,hbe4678,hbe4678,2007-08-25 08:00,2007-11-29 17:00,520
1006,12457187,14517,6815935,13329,1,0,N,N,N,CP_Units,TT_Task,DT_FixedDUR2,RV_OK,TK_NotStart,CO02AP0150,02A Punchlist / Test Piping,,632.016666666667,0,256,0,0,0,256,0,0,0,,,,2008-02-06 08:01,2008-03-15 08:01,,2007-10-31 08:00,2007-12-06 17:00,2007-10-31 08:00,2007-12-06 17:00,2007-10-31 08:00,2007-12-06 17:00,,2008-02-06 08:01,2008-03-15 08:01,,PT_Normal,,,,,2WAaPOPSRKeesMS4cWKbgQ,T6DWTB/Dk0qIG9aBbLbqhB,,,N,0,0,,,2007-02-01 02:41,2007-02-04 01:00,hbe4678,hbe4678,2007-10-31 08:00,2007-12-06 17:00,256
1007,12457188,14517,6815935,13329,1,0,N,N,N,CP_Units,TT_WBS,DT_FixedDUR2,RV_OK,TK_NotStart,WO020P0100,020 Above Ground Pipe,1342,-7.98333333333333,2712,1920,0,766581.79,766581.79,1920,0,0,0,,,,2007-04-02 08:00,2008-03-15 08:01,,2007-05-13 08:00,2008-03-15 17:00,2007-05-13 08:00,2008-03-15 17:00,2007-05-13 08:00,2008-03-15 17:00,,2007-04-02 08:00,2008-03-15 08:01,,PT_Normal,,,,,O0KKWAoGSXWSPeApKise8A,P3+PBMSe6Euw/1s5twPUkR,,,N,0,0,,,2007-02-01 02:41,2007-02-04 01:05,hbe4678,hbe4678,2007-05-13 08:00,2008-03-15 17:00,1920
1008,12457189,14517,6815935,13329,1,0,N,N,N,CP_Units,TT_Task,DT_FixedDUR2,RV_OK,TK_NotStart,CO02BP0130,02B LB Pipe Erection,,960.016666666667,0,192,0,0,0,192,0,0,0,2007-08-18 08:00,,,2008-02-02 08:01,2008-03-01 08:01,,2007-08-18 08:00,2007-09-15 17:00,2007-08-18 08:00,2007-09-15 17:00,2007-08-18 08:00,2007-09-15 17:00,,2008-02-02 08:01,2008-03-01 08:01,CS_MSOA,PT_Normal,,,,,g2S6JNImSPGnmZIESf+N9A,I2BJSZAEnkS3m6CEWE3cnB,,,N,0,0,,,2007-02-01 02:41,2007-02-04 01:00,hbe4678,hbe4678,2007-08-18 08:00,2007-09-15 17:00,192
1009,12457190,14517,6815935,13329,1,0,N,N,N,CP_Units,TT_Task,DT_FixedDUR2,RV_OK,TK_NotStart,CO02BP0140,02B SB Pipe Erection,,960.016666666667,0,96,0,0,0,96,0,0,0,,,,2008-02-23 08:01,2008-03-08 08:01,,2007-09-08 08:00,2007-09-29 17:00,2007-09-08 08:00,2007-09-29 17:00,2007-09-08 08:00,2007-09-29 17:00,,2008-02-23 08:01,2008-03-08 08:01,,PT_Normal,,,,,XXn0DBrAQIW54sJQHxOenw,ipetZD3dF0eTBpQNLmv/2h,,,N,0,0,,,2007-02-01 02:41,2007-02-04 01:00,hbe4678,hbe4678,2007-09-08 08:00,2007-09-29 17:00,96
1010,12457191,14517,6815935,13329,1,0,N,N,N,CP_Units,TT_Task,DT_FixedDUR2,RV_OK,TK_NotStart,CO02BP0150,02B Punchlist / Test Piping,,960.016666666667,0,48,0,0,0,48,0,0,0,,,,2008-03-08 08:01,2008-03-15 08:01,,2007-10-01 08:00,2007-10-20 17:00,2007-10-01 08:00,2007-10-20 17:00,2007-10-01 08:00,2007-10-20 17:00,,2008-03-08 08:01,2008-03-15 08:01,,PT_Normal,,,,,cNcicbxxTYCmY6Ij9nN8hA,WVrVEHR9TkiSsBZxssHNZh,,,N,0,0,,,2007-02-01 02:41,2007-02-04 01:00,hbe4678,hbe4678,2007-10-01 08:00,2007-10-20 17:00,48
1011,12457192,14517,6815935,13329,1,0,N,N,N,CP_Units,TT_Task,DT_FixedDUR2,RV_OK,TK_NotStart,CO02DP0130,02D LB Pipe Erection,,496.016666666667,0,560,0,0,0,560,0,0,0,2007-08-11 08:00,,,2007-11-13 08:01,2008-02-09 08:01,,2007-08-11 08:00,2007-11-21 17:00,2007-08-11 08:00,2007-11-21 17:00,2007-08-11 08:00,2007-11-21 17:00,,2007-11-13 08:01,2008-02-09 08:01,CS_MSOA,PT_Normal,,,,,5Eau8hEZSyGF/DWnl3xkEw,IDKQH7XmQ0aDv0HCUVHnGh,,,N,0,0,,,2007-02-01 02:41,2007-02-04 01:00,hbe4678,hbe4678,2007-08-11 08:00,2007-11-21 17:00,560
1012,12457193,14517,6815935,13329,1,0,N,N,N,CP_Units,TT_Task,DT_FixedDUR2,RV_OK,TK_NotStart,CO02DP0140,02D SB Pipe Erection,,496.016666666667,0,352,0,0,0,352,0,0,0,,,,2008-01-16 08:01,2008-03-08 08:01,,2007-10-30 08:00,2007-12-25 17:00,2007-10-30 08:00,2007-12-25 17:00,2007-10-30 08:00,2007-12-25 17:00,,2008-01-16 08:01,2008-03-08 08:01,,PT_Normal,,,,,Tl8TFp9CSyKIyt0ptgrQpw,76qbJp371EqoDaF2DZDbMR,,,N,0,0,,,2007-02-01 02:41,2007-02-04 01:00,hbe4678,hbe4678,2007-10-30 08:00,2007-12-25 17:00,352
1013,12457194,14517,6815935,13329,1,0,N,N,N,CP_Units,TT_Task,DT_FixedDUR2,RV_OK,TK_NotStart,CO02DP0150,02D Punchlist / Test Piping,,496.016666666667,0,176,0,0,0,176,0,0,0,,,,2008-02-18 08:01,2008-03-15 08:01,,2007-12-02 08:00,2008-01-01 17:00,2007-12-02 08:00,2008-01-01 17:00,2007-12-02 08:00,2008-01-01 17:00,,2008-02-18 08:01,2008-03-15 08:01,,PT_Normal,,,,,fYG/Q0bzSIKLLFD7rhm3Kw,0NH5GLyQxESvcxzq+4xztB,,,N,0,0,,,2007-02-01 02:41,2007-02-04 01:00,hbe4678,hbe4678,2007-12-02 08:00,2008-01-01 17:00,176
1014,12457195,14517,6815935,13329,1,0,N,N,N,CP_Units,TT_Task,DT_FixedDUR2,RV_OK,TK_NotStart,CO02EP0130,02E LB Pipe Erection,,536.016666666667,0,960,0,0,0,960,0,0,0,,,,2007-09-17 08:01,2008-03-01 08:01,,2007-06-28 08:00,2007-12-06 17:00,2007-06-28 08:00,2007-12-06 17:00,2007-06-28 08:00,2007-12-06 17:00,,2007-09-17 08:01,2008-03-01 08:01,,PT_Normal,,,,,6wxipW5ZQn6fZbLW3Vyd3g,LK/uUxzUA0GanS6zh5ZvJx,,,N,0,0,,,2007-02-01 02:41,2007-02-04 01:00,hbe4678,hbe4678,2007-06-28 08:00,2007-12-06 17:00,960
1015,12457196,14517,6815935,13329,1,0,N,N,N,CP_Units,TT_Task,DT_FixedDUR2,RV_OK,TK_NotStart,CO02EP0140,02E SB Pipe Erection,,536.016666666667,0,480,0,0,0,480,0,0,0,,,,2007-12-29 08:01,2008-03-08 08:01,,2007-09-15 08:00,2007-12-13 17:00,2007-09-15 08:00,2007-12-13 17:00,2007-09-15 08:00,2007-12-13 17:00,,2007-12-29 08:01,2008-03-08 08:01,,PT_Normal,,,,,58vOBDSKSqqrDyakAM1FEA,rEckftV80EyIgqxxd5A8hR,,,N,0,0,,,2007-02-01 02:41,2007-02-04 01:00,hbe4678,hbe4678,2007-09-15 08:00,2007-12-13 17:00,480
1016,12457197,14517,6815935,13329,1,0,N,N,N,CP_Units,TT_Task,DT_FixedDUR2,RV_OK,TK_NotStart,CO02EP0150,02E Punchlist / Test Piping,,536.016666666667,0,240,0,0,0,240,0,0,0,,,,2008-02-09 08:01,2008-03-15 08:01,,2007-11-17 08:00,2007-12-26 17:00,2007-11-17 08:00,2007-12-26 17:00,2007-11-17 08:00,2007-12-26 17:00,,2008-02-09 08:01,2008-03-15 08:01,,PT_Normal,,,,,LHLtBKwiSnOXNZ1aYJVo5g,XOUQa3a9GEWHbGlAubdz4x,,,N,0,0,,,2007-02-01 02:41,2007-02-04 01:00,hbe4678,hbe4678,2007-11-17 08:00,2007-12-26 17:00,240
1017,12457198,14517,6815935,13329,1,0,N,N,N,CP_Units,TT_Task,DT_FixedDUR2,RV_OK,TK_NotStart,CO02FP0130,02F LB Pipe Erection,,816.016666666667,0,432,0,0,0,432,0,0,0,2007-08-04 08:00,,,2007-12-29 08:01,2008-03-01 08:01,,2007-08-04 08:00,2007-10-27 17:00,2007-08-04 08:00,2007-10-27 17:00,2007-08-04 08:00,2007-10-27 17:00,,2007-12-29 08:01,2008-03-01 08:01,CS_MSOA,PT_Normal,,,,,3z2qwAbcRAKNXJFTcPy63Q,S/oRGdxy9kCrrE9ZIqEtMx,,,N,0,0,,,2007-02-01 02:41,2007-02-04 01:00,hbe4678,hbe4678,2007-08-04 08:00,2007-10-27 17:00,432
1018,12457199,14517,6815935,13329,1,0,N,N,N,CP_Units,TT_Task,DT_FixedDUR2,RV_OK,TK_NotStart,CO02FP0140,02F SB Pipe Erection,,816.016666666667,0,432,0,0,0,432,0,0,0,,,,2008-01-05 08:01,2008-03-08 08:01,,2007-08-11 08:00,2007-11-03 17:00,2007-08-11 08:00,2007-11-03 17:00,2007-08-11 08:00,2007-11-03 17:00,,2008-01-05 08:01,2008-03-08 08:01,,PT_Normal,,,,,MXBg11v+RsmVfqeeo42CKQ,Bq1Nx47vPUeV/kegDRfJIB,,,N,0,0,,,2007-02-01 02:41,2007-02-04 01:00,hbe4678,hbe4678,2007-08-11 08:00,2007-11-03 17:00,432
1019,12457200,14517,6815935,13329,1,0,N,N,N,CP_Units,TT_Task,DT_FixedDUR2,RV_OK,TK_NotStart,CO02FP0150,02F Punchlist / Test Piping,,816.016666666667,0,216,0,0,0,216,0,0,0,,,,2008-02-12 08:01,2008-03-15 08:01,,2007-09-24 08:00,2007-11-10 17:00,2007-09-24 08:00,2007-11-10 17:00,2007-09-24 08:00,2007-11-10 17:00,,2008-02-12 08:01,2008-03-15 08:01,,PT_Normal,,,,,niuG1tqvR36op7yBap7zwg,3YxQVOmu50q2X+GzlqG1NB,,,N,0,0,,,2007-02-01 02:41,2007-02-04 01:00,hbe4678,hbe4678,2007-09-24 08:00,2007-11-10 17:00,216
1020,12457201,14517,6815935,13329,1,0,N,N,N,CP_Units,TT_Task,DT_FixedDUR2,RV_OK,TK_NotStart,CO02GP0130,02G LB Pipe Erection,,840,0,792,0,0,0,792,0,0,0,,,,2007-10-25 08:01,2008-02-24 08:01,,2007-06-03 08:01,2007-10-10 08:01,2007-06-03 08:01,2007-10-10 08:01,2007-06-03 08:01,2007-10-10 08:01,,2007-10-25 08:01,2008-02-24 08:01,,PT_Normal,,,,,nLxNB2jLTM+S/Foa/+9K8g,Jongu1ZXj02AnkGHWS8DCh,,,N,0,0,,,2007-02-01 02:41,2007-02-04 01:05,hbe4678,hbe4678,2007-06-03 08:01,2007-10-10 08:01,792
1021,12457202,14517,6815935,13329,1,0,N,N,N,CP_Units,TT_Task,DT_FixedDUR2,RV_OK,TK_NotStart,CO02GP0140,02G SB Pipe Erection,,840,0,792,0,0,0,792,0,0,0,,,,2007-11-01 08:01,2008-03-02 08:01,,2007-06-10 08:01,2007-10-25 08:01,2007-06-10 08:01,2007-10-25 08:01,2007-06-10 08:01,2007-10-25 08:01,,2007-11-01 08:01,2008-03-02 08:01,,PT_Normal,,,,,IQK8xOuEQFicyqtGx3mWqg,X+eYQjfeOUWDy6Ek0DULmh,,,N,0,0,,,2007-02-01 02:41,2007-02-04 01:05,hbe4678,hbe4678,2007-06-10 08:01,2007-10-25 08:01,792
1022,12457203,14517,6815935,13329,1,0,N,N,N,CP_Units,TT_Task,DT_FixedDUR2,RV_OK,TK_NotStart,CO02GP0150,02G Punchlist / Test Piping,,840,0,384,0,0,0,384,0,0,0,,,,2008-01-13 08:01,2008-03-09 08:01,,2007-08-15 08:01,2007-11-01 08:01,2007-08-15 08:01,2007-11-01 08:01,2007-08-15 08:01,2007-11-01 08:01,,2008-01-13 08:01,2008-03-09 08:01,,PT_Normal,,,,,wK3yqLUKQG+B0NQe3sFtgw,+P4AeBhbT06yCUSD8zEzvx,,,N,0,0,,,2007-02-01 02:41,2007-02-04 01:05,hbe4678,hbe4678,2007-08-15 08:01,2007-11-01 08:01,384
1023,12457204,14517,6815935,13329,1,0,N,N,N,CP_Units,TT_Task,DT_FixedDUR2,RV_OK,TK_NotStart,CO02JP0130,02J LB Pipe Erection,,784.016666666667,0,584,0,0,0,584,0,0,0,,,,2007-11-26 08:01,2008-02-25 08:01,,2007-07-12 08:00,2007-10-27 17:00,2007-07-12 08:00,2007-10-27 17:00,2007-07-12 08:00,2007-10-27 17:00,,2007-11-26 08:01,2008-02-25 08:01,,PT_Normal,,,,,BY1dQm8UTlmTYgOFVuiGeA,Dl5TCmFMR0inzqxTWIbQeh,,,N,0,0,,,2007-02-01 02:41,2007-02-04 01:00,hbe4678,hbe4678,2007-07-12 08:00,2007-10-27 17:00,584
1024,12457205,14517,6815935,13329,1,0,N,N,N,CP_Units,TT_Task,DT_FixedDUR2,RV_OK,TK_NotStart,CO02LP0130,02L LB Pipe Erection,,-119.983333333333,0,1168,0,0,0,1168,0,0,0,,,,2007-07-30 08:01,2008-02-13 08:01,,2007-08-16 08:00,2008-03-01 17:00,2007-08-16 08:00,2008-03-01 17:00,2007-08-16 08:00,2008-03-01 17:00,,2007-07-30 08:01,2008-02-13 08:01,,PT_Normal,,,,,EXOY0kXXTdqzzFPAiyEWFw,,,,N,0,0,,,2007-02-01 02:41,2007-02-04 01:00,hbe4678,hbe4678,2007-08-16 08:00,2008-03-01 17:00,1168
1025,12457206,14517,6815935,13329,1,0,N,N,N,CP_Units,TT_Task,DT_FixedDUR2,RV_OK,TK_NotStart,CO02LP0140,02L SB Pipe Erection,,-119.983333333333,0,1168,0,0,0,1168,0,0,0,,,,2007-08-06 08:01,2008-02-20 08:01,,2007-08-23 08:00,2008-03-08 17:00,2007-08-23 08:00,2008-03-08 17:00,2007-08-23 08:00,2008-03-08 17:00,,2007-08-06 08:01,2008-02-20 08:01,,PT_Normal,,,,,JqM1ll5rR6qU51oeV4Ee+g,,,,N,0,0,,,2007-02-01 02:41,2007-02-04 01:00,hbe4678,hbe4678,2007-08-23 08:00,2008-03-08 17:00,1168
1026,12457207,14517,6815937,13329,1,0,N,N,N,CP_Units,TT_Task,DT_FixedDUR2,RV_OK,TK_NotStart,CO02JS0140,02J Pre-Install Misc Steel - 104-D1,,864,415.983333333333,96,0,0,0,96,0,0,0,,,,2007-08-04 08:01,2007-08-18 08:01,,2007-03-31 08:01,2007-04-14 08:01,2007-03-31 08:01,2007-04-14 08:01,2007-03-31 08:01,2007-04-14 08:01,,2007-08-04 08:01,2007-08-18 08:01,,PT_Normal,,,,,R/LbhgpwQ8yDH+5yH8Untw,wRpNzp2R4EabYXe4Q3/XPB,,,N,0,0,,,2007-02-01 02:41,2007-02-04 01:00,hbe4678,hbe4678,2007-03-31 08:01,2007-04-14 08:01,96
1027,12457208,14517,6815937,13329,1,0,N,N,N,CP_Units,TT_Task,DT_FixedDUR2,RV_OK,TK_NotStart,CO02KS0120,02K Erect Misc Steel,,808,0,144,0,0,0,144,0,0,0,,,,2007-11-24 08:01,2007-12-15 08:01,,2007-07-07 08:01,2007-07-28 08:01,2007-07-07 08:01,2007-07-28 08:01,2007-07-07 08:01,2007-07-28 08:01,,2007-11-24 08:01,2007-12-15 08:01,,PT_Normal,,,,,dJ6KD+bCR4SCSsYxgzY0tw,YojqFYFT/EeNXNCai8y0bx,,,N,0,0,,,2007-02-01 02:41,2007-02-01 02:43,hbe4678,hbe4678,2007-07-07 08:01,2007-07-28 08:01,144
1028,12457209,14517,6815937,13329,1,0,N,N,N,CP_Units,TT_Task,DT_FixedDUR2,RV_OK,TK_NotStart,CO02KS0130,02K Pre-Install Misc Steel - Static Equipment,,808,0,96,0,0,0,96,0,0,0,,,,2007-10-20 08:01,2007-11-03 08:01,,2007-06-02 08:01,2007-06-16 08:01,2007-06-02 08:01,2007-06-16 08:01,2007-06-02 08:01,2007-06-16 08:01,,2007-10-20 08:01,2007-11-03 08:01,,PT_Normal,,,,,h8jVjjEOQXumpa694D3hww,/gR9Rp47VEOh10D9DZ4/YB,,,N,0,0,,,2007-02-01 02:41,2007-02-04 01:00,hbe4678,hbe4678,2007-06-02 08:01,2007-06-16 08:01,96
1029,12457210,14517,6815937,13329,1,0,N,N,N,CP_Units,TT_Task,DT_FixedDUR2,RV_OK,TK_NotStart,CO02MS0110,02M Erect Structural Steel -  Structure,,984.016666666667,0,144,0,0,0,144,0,0,0,,,,2007-11-06 08:01,2007-11-27 08:01,,2007-05-24 08:00,2007-06-13 17:00,2007-05-24 08:00,2007-06-13 17:00,2007-05-24 08:00,2007-06-13 17:00,,2007-11-06 08:01,2007-11-27 08:01,,PT_Normal,,,,,GsaJSeZZSQaq/ygILgmnBQ,ccgtgPkMw0Ou4dY8lCT4jB,,,N,0,0,,,2007-02-01 02:41,2007-02-04 01:00,hbe4678,hbe4678,2007-05-24 08:00,2007-06-13 17:00,144
1030,12457211,14517,6815937,13329,1,0,N,N,N,CP_Units,TT_Task,DT_FixedDUR2,RV_OK,TK_NotStart,CO02MS0120,02M Erect Misc Steel -  Structure,,984.016666666667,0,144,0,0,0,144,0,0,0,,,,2007-12-04 08:01,2007-12-31 08:01,,2007-06-21 08:00,2007-07-11 17:00,2007-06-21 08:00,2007-07-11 17:00,2007-06-21 08:00,2007-07-11 17:00,,2007-12-04 08:01,2007-12-31 08:01,,PT_Normal,,,,,aiQhh+o4T0i99urnJBs4Lw,gbS1U2WG0UeWzbaSqlZnxR,,,N,0,0,,,2007-02-01 02:41,2007-02-04 01:00,hbe4678,hbe4678,2007-06-21 08:00,2007-07-11 17:00,144
1031,12457212,14517,6815937,13329,1,0,N,N,N,CP_Units,TT_Task,DT_FixedDUR2,RV_OK,TK_NotStart,CO02MS0130,02M Pre-Install Misc Steel - 105-D,,504,55.9833333333333,96,0,0,0,96,0,0,0,,,,2007-08-21 08:01,2007-09-04 08:01,,2007-06-09 08:01,2007-06-23 08:01,2007-06-09 08:01,2007-06-23 08:01,2007-06-09 08:01,2007-06-23 08:01,,2007-08-21 08:01,2007-09-04 08:01,,PT_Normal,,,,,GbrXeaUSTWaO9olmPxo5lg,fIUpfWsFkESX6UBRt/lAEB,,,N,0,0,,,2007-02-01 02:41,2007-02-04 01:00,hbe4678,hbe4678,2007-06-09 08:01,2007-06-23 08:01,96
1032,12457213,14517,6815937,13329,1,0,N,N,N,CP_Units,TT_Task,DT_FixedDUR2,RV_OK,TK_NotStart,CO02NS0120,02N Erect Misc Steel,,448.016666666667,0,240,0,0,0,240,0,0,0,,,,2007-10-01 08:01,2007-11-18 08:01,,2007-07-18 08:00,2007-08-21 17:00,2007-07-18 08:00,2007-08-21 17:00,2007-07-18 08:00,2007-08-21 17:00,,2007-10-01 08:01,2007-11-18 08:01,,PT_Normal,,,,,LPUYtkWZQIWLh9WheDKJVg,aQDai6qedkuRjbkI6hvYaB,,,N,0,0,,,2007-02-01 02:41,2007-02-04 01:00,hbe4678,hbe4678,2007-07-18 08:00,2007-08-21 17:00,240
1033,12457214,14517,6815937,13329,1,0,N,N,N,CP_Units,TT_Task,DT_FixedDUR2,RV_OK,TK_NotStart,CO02PS0120,02P Erect Misc Steel,,824.016666666667,0,192,0,0,0,192,0,0,0,,,,2007-12-18 08:01,2008-01-21 08:01,,2007-07-29 08:00,2007-08-25 17:00,2007-07-29 08:00,2007-08-25 17:00,2007-07-29 08:00,2007-08-25 17:00,,2007-12-18 08:01,2008-01-21 08:01,,PT_Normal,,,,,N8ybSOClTZGZeDiS+IPPCg,2E/cdwbwYkmIdWESp/S9Rh,,,N,0,0,,,2007-02-01 02:41,2007-02-04 01:00,hbe4678,hbe4678,2007-07-29 08:00,2007-08-25 17:00,192
1034,12457215,14517,6815937,13329,1,0,N,N,N,CP_Units,TT_Task,DT_FixedDUR2,RV_OK,TK_NotStart,CO02QS0120,02Q Erect Misc Steel,,808.016666666667,0,144,0,0,0,144,0,0,0,,,,2007-12-09 08:01,2008-01-05 08:01,,2007-07-22 08:00,2007-08-11 17:00,2007-07-22 08:00,2007-08-11 17:00,2007-07-22 08:00,2007-08-11 17:00,,2007-12-09 08:01,2008-01-05 08:01,,PT_Normal,,,,,LwMgLdRJR3ijkkQZ0/ZWYw,4oet0AOiH06K+TeO252b1B,,,N,0,0,,,2007-02-01 02:41,2007-02-04 01:00,hbe4678,hbe4678,2007-07-22 08:00,2007-08-11 17:00,144
1035,12457216,14517,6815937,13329,1,0,N,N,N,CP_Units,TT_Task,DT_FixedDUR2,RV_OK,TK_NotStart,CO02YS0120,02Y Erect Misc Steel -  Pipe Rack,,816.016666666667,96,600,0,0,0,600,0,0,0,,,,2007-08-15 08:01,2007-12-03 08:01,,2007-04-18 08:00,2007-07-14 17:00,2007-04-18 08:00,2007-07-14 17:00,2007-04-18 08:00,2007-07-14 17:00,,2007-08-15 08:01,2007-12-03 08:01,,PT_Normal,,,,,9nTUpXLjTeWJxQB3NWiX1g,swqWRTNa+0+eq/xpxrifbR,,,N,0,0,,,2007-02-01 02:41,2007-02-04 01:00,hbe4678,hbe4678,2007-04-18 08:00,2007-07-14 17:00,600
1036,12457217,14517,6815937,13329,1,0,N,N,N,CP_Units,TT_Task,DT_FixedDUR2,RV_OK,TK_NotStart,CO02GS0130,02G Erect Misc. Steel (Platforms),,856.016666666667,0,640,0,0,0,640,0,0,0,,,,2007-10-25 08:01,2008-02-02 08:01,,2007-05-31 08:00,2007-09-01 17:00,2007-05-31 08:00,2007-09-01 17:00,2007-05-31 08:00,2007-09-01 17:00,,2007-10-25 08:01,2008-02-02 08:01,,PT_Normal,,,,,+8hJXd6hQI+gQHnidJqV6Q,fInDGSJ2HUWoo8Ozf/shjx,,,N,0,0,,,2007-02-01 02:41,2007-02-04 01:05,hbe4678,hbe4678,2007-05-31 08:00,2007-09-01 17:00,640
1037,12457218,14517,6815937,13329,1,0,N,N,N,CP_Units,TT_Task,DT_FixedDUR2,RV_OK,TK_NotStart,CO02HS0110,02H Erect Structural Steel -  Structure,,80.0166666666667,0,288,0,0,0,288,0,0,0,,,,2007-09-19 08:01,2007-11-19 08:01,,2007-09-04 08:00,2007-11-06 17:00,2007-09-04 08:00,2007-11-06 17:00,2007-09-04 08:00,2007-11-06 17:00,,2007-09-19 08:01,2007-11-19 08:01,,PT_Normal,,,,,XSHMdpHSScC4A3q0Lnhayg,UW8fVdeGvkONW0phlkHO5B,,,N,0,0,,,2007-02-01 02:41,2007-02-04 01:00,hbe4678,hbe4678,2007-09-04 08:00,2007-11-06 17:00,288
1038,12457219,14517,6815937,13329,1,0,N,N,N,CP_Units,TT_Task,DT_FixedDUR2,RV_OK,TK_NotStart,CO02HS0130,02H Pre-Install Misc Steel - 103-D,,544,95.9833333333333,96,0,0,0,96,0,0,0,,,,2007-07-23 08:01,2007-08-06 08:01,,2007-05-05 08:01,2007-05-19 08:01,2007-05-05 08:01,2007-05-19 08:01,2007-05-05 08:01,2007-05-19 08:01,,2007-07-23 08:01,2007-08-06 08:01,,PT_Normal,,,,,vgjGsVDfTAyfZyJ3nC9Daw,ocBSDicXfUaiz3YSqJiocx,,,N,0,0,,,2007-02-01 02:41,2007-02-04 01:00,hbe4678,hbe4678,2007-05-05 08:01,2007-05-19 08:01,96
1039,12457220,14517,6815937,13329,1,0,N,N,N,CP_Units,TT_Task,DT_FixedDUR2,RV_OK,TK_NotStart,CO02HS0140,02H Install Misc Steel - 156-F,,816.016666666667,736,96,0,0,0,96,0,0,0,,,,2007-08-23 08:01,2007-09-06 08:01,,2007-04-26 08:00,2007-05-09 17:00,2007-04-26 08:00,2007-05-09 17:00,2007-04-26 08:00,2007-05-09 17:00,,2007-08-23 08:01,2007-09-06 08:01,,PT_Normal,,,,,pVBOzTW3RLC1ZdQ1fYSSMw,MQxualzis0qZd5WFOojSex,,,N,0,0,,,2007-02-01 02:41,2007-02-04 01:00,hbe4678,hbe4678,2007-04-26 08:00,2007-05-09 17:00,96
1040,12457221,14517,6815937,13329,1,0,N,N,N,CP_Units,TT_Task,DT_FixedDUR2,RV_OK,TK_NotStart,CO02CS0120,02C Erect Misc. Steel (Platforms),,664.016666666667,0,640,0,0,0,640,0,0,0,,,,2007-09-05 08:01,2008-01-05 08:01,,2007-05-31 08:00,2007-09-01 17:00,2007-05-31 08:00,2007-09-01 17:00,2007-05-31 08:00,2007-09-01 17:00,,2007-09-05 08:01,2008-01-05 08:01,,PT_Normal,,,,,j+7aqxozRG6y8I2LMbwAUA,tyhAlmFnLE2bMFMoZl2S/B,,,N,0,0,,,2007-02-01 02:41,2007-02-04 01:00,hbe4678,hbe4678,2007-05-31 08:00,2007-09-01 17:00,640
1041,12457222,14517,6815937,13329,1,0,N,N,N,CP_Units,TT_Task,DT_FixedDUR2,RV_OK,TK_NotStart,CO02YS0110,02Y Erect Structural Steel -  Pipe Rack,,-280,0,1056,0,0,0,1056,0,0,0,2007-02-11 08:00,,,2006-12-25 08:00,2007-06-03 17:00,,2007-02-11 08:00,2007-07-14 17:00,2007-02-11 08:00,2007-07-14 17:00,2007-02-11 08:00,2007-07-14 17:00,,2006-12-25 08:00,2007-06-03 17:00,CS_MSOA,PT_Normal,,,,,xYPkIOiHRg2nCWU7F1242A,dHsoNNknbEusjODewIsJNR,,,N,0,0,,,2007-02-01 02:41,2007-02-01 02:43,hbe4678,hbe4678,2007-02-11 08:00,2007-07-14 17:00,1056
1042,12457223,14517,6815937,13329,1,0,N,N,N,CP_Units,TT_Task,DT_FixedDUR2,RV_OK,TK_NotStart,CO02ES0110,02E Erect Structural Steel,,1016.01666666667,0,144,0,0,0,144,0,0,0,,,,2007-12-09 08:01,2008-01-05 08:01,,2007-06-21 08:00,2007-07-11 17:00,2007-06-21 08:00,2007-07-11 17:00,2007-06-21 08:00,2007-07-11 17:00,,2007-12-09 08:01,2008-01-05 08:01,,PT_Normal,,,,,KM/8S4u1TZqQ2KN2Qe31lQ,V4pdXjMZu02jLEvOZ+ayvh,,,N,0,0,,,2007-02-01 02:41,2007-02-04 01:00,hbe4678,hbe4678,2007-06-21 08:00,2007-07-11 17:00,144
1043,12457224,14517,6815937,13329,1,0,N,N,N,CP_Units,TT_Task,DT_FixedDUR2,RV_OK,TK_NotStart,CO02LS0110,02L Erect Structure,,-119.983333333333,0,480,0,0,0,480,0,0,0,,,,2007-04-23 08:01,2007-07-02 08:01,,2007-05-10 08:00,2007-07-18 17:00,2007-05-10 08:00,2007-07-18 17:00,2007-05-10 08:00,2007-07-18 17:00,,2007-04-23 08:01,2007-07-02 08:01,,PT_Normal,,,,,y0nnvapfSKuQkfKs+LZo0Q,,,,N,0,0,,,2007-02-01 02:41,2007-02-04 01:00,hbe4678,hbe4678,2007-05-10 08:00,2007-07-18 17:00,480
1044,12457225,14517,6815937,13329,1,0,N,N,N,CP_Units,TT_Task,DT_FixedDUR2,RV_OK,TK_NotStart,CO02LS0120,02L Erect Misc Steel,,312.016666666667,0,192,0,0,0,192,0,0,0,,,,2007-07-23 08:01,2007-08-20 08:01,,2007-06-07 08:00,2007-07-04 17:00,2007-06-07 08:00,2007-07-04 17:00,2007-06-07 08:00,2007-07-04 17:00,,2007-07-23 08:01,2007-08-20 08:01,,PT_Normal,,,,,ibQT7J31Scib3kVdzwL3lg,,,,N,0,0,,,2007-02-01 02:41,2007-02-04 01:00,hbe4678,hbe4678,2007-06-07 08:00,2007-07-04 17:00,192
1045,12457226,14517,6815937,13329,1,0,N,N,N,CP_Units,TT_Task,DT_FixedDUR2,RV_OK,TK_NotStart,CO02LS0130,02L Pre-Install Misc Steel - 101-E,,904,455.983333333333,96,0,0,0,96,0,0,0,,,,2007-08-09 08:01,2007-08-23 08:01,,2007-03-31 08:01,2007-04-14 08:01,2007-03-31 08:01,2007-04-14 08:01,2007-03-31 08:01,2007-04-14 08:01,,2007-08-09 08:01,2007-08-23 08:01,,PT_Normal,,,,,kGW+UPG8RMqPx47OdWdixw,,,,N,0,0,,,2007-02-01 02:41,2007-02-04 01:00,hbe4678,hbe4678,2007-03-31 08:01,2007-04-14 08:01,96
1046,12457227,14517,6815937,13329,1,0,N,N,N,CP_Units,TT_Task,DT_FixedDUR2,RV_OK,TK_NotStart,CO02LS0140,02L Pre-Install Misc Steel - 102-E,,608,159.983333333333,96,0,0,0,96,0,0,0,,,,2007-08-15 08:01,2007-08-29 08:01,,2007-05-19 08:01,2007-06-02 08:01,2007-05-19 08:01,2007-06-02 08:01,2007-05-19 08:01,2007-06-02 08:01,,2007-08-15 08:01,2007-08-29 08:01,,PT_Normal,,,,,WSwnaoH8TpGW5geRXrz6rw,,,,N,0,0,,,2007-02-01 02:41,2007-02-04 01:00,hbe4678,hbe4678,2007-05-19 08:01,2007-06-02 08:01,96
1047,12457228,14517,6815937,13329,1,0,N,N,N,CP_Units,TT_Task,DT_FixedDUR2,RV_OK,TK_NotStart,CO02AS0110,02A Erect Structural Steel,,824.016666666667,0,144,0,0,0,144,0,0,0,,,,2007-11-04 08:01,2007-11-25 08:01,,2007-06-14 08:00,2007-07-04 17:00,2007-06-14 08:00,2007-07-04 17:00,2007-06-14 08:00,2007-07-04 17:00,,2007-11-04 08:01,2007-11-25 08:01,,PT_Normal,,,,,F2ZX7CxiTNS3rs1a0aLZ7Q,HVJaiN7z4USP5MtfIxab9B,,,N,0,0,,,2007-02-01 02:41,2007-02-04 01:00,hbe4678,hbe4678,2007-06-14 08:00,2007-07-04 17:00,144
1048,12457229,14517,6815937,13329,1,0,N,N,N,CP_Units,TT_Task,DT_FixedDUR2,RV_OK,TK_NotStart,CO02AS0120,02A Erect Misc Steel,,824.016666666667,0,144,0,0,0,144,0,0,0,,,,2007-12-02 08:01,2007-12-29 08:01,,2007-07-12 08:00,2007-08-01 17:00,2007-07-12 08:00,2007-08-01 17:00,2007-07-12 08:00,2007-08-01 17:00,,2007-12-02 08:01,2007-12-29 08:01,,PT_Normal,,,,,QZPznp1nTmu5F1cVDS6WsQ,tyhAlmFnLE2bMFMoZl2S/B,,,N,0,0,,,2007-02-01 02:41,2007-02-04 01:00,hbe4678,hbe4678,2007-07-12 08:00,2007-08-01 17:00,144
1049,12457230,14517,6815937,13329,1,0,N,N,N,CP_Units,TT_WBS,DT_FixedDUR2,RV_OK,TK_Active,WO020S0100,020 Erect Steel,1353,552.016666666667,3560,1696,917.94,96137.18,97055.12,1696,0,0,0,,2007-02-11 08:00,,2006-12-25 08:00,2008-02-02 08:01,,2007-02-11 08:00,2007-11-06 17:00,2007-02-11 08:00,2007-11-06 17:00,2007-02-11 08:00,2007-11-06 17:00,,2006-12-25 08:00,2008-02-02 08:01,,PT_Normal,,,,,b78GhWI6TTScVeu2dzJtNg,u25XzCwejEC2MnrPzU/Ivh,,,N,0,0,,,2007-02-01 02:41,2007-02-04 01:05,hbe4678,hbe4678,2007-02-11 08:00,2007-11-06 17:00,1696
1050,12457231,14517,6815937,13329,1,0,N,N,N,CP_Units,TT_Task,DT_FixedDUR2,RV_OK,TK_NotStart,CO02DS0110,02D Erect Structural Steel,,744.016666666667,0,144,0,0,0,144,0,0,0,,,,2007-10-06 08:01,2007-11-06 08:01,,2007-06-07 08:00,2007-06-27 17:00,2007-06-07 08:00,2007-06-27 17:00,2007-06-07 08:00,2007-06-27 17:00,,2007-10-06 08:01,2007-11-06 08:01,,PT_Normal,,,,,8PxedQ4QQcyMV240nk1VwA,euoDFzkIUUCu2eU/3ahdQh,,,N,0,0,,,2007-02-01 02:41,2007-02-04 01:00,hbe4678,hbe4678,2007-06-07 08:00,2007-06-27 17:00,144
1051,12457232,14517,6815937,13329,1,0,N,N,N,CP_Units,TT_Task,DT_FixedDUR2,RV_OK,TK_NotStart,CO02DS0120,02D Erect Misc Steel,,744.016666666667,0,144,0,0,0,144,0,0,0,,,,2007-11-06 08:01,2007-11-27 08:01,,2007-06-28 08:00,2007-07-18 17:00,2007-06-28 08:00,2007-07-18 17:00,2007-06-28 08:00,2007-07-18 17:00,,2007-11-06 08:01,2007-11-27 08:01,,PT_Normal,,,,,jpdsgOIoTOq1wQP1QwzRaw,axrFsu1pfUK/E7xXE6S6mh,,,N,0,0,,,2007-02-01 02:41,2007-02-04 01:00,hbe4678,hbe4678,2007-06-28 08:00,2007-07-18 17:00,144
1052,12457233,14517,6815937,13329,1,0,N,N,N,CP_Units,TT_Task,DT_FixedDUR2,RV_OK,TK_NotStart,CO02ES0120,02E Erect Misc Steel,,536.016666666667,0,144,0,0,0,144,0,0,0,,,,2007-09-08 08:01,2007-10-21 08:01,,2007-06-21 08:00,2007-07-11 17:00,2007-06-21 08:00,2007-07-11 17:00,2007-06-21 08:00,2007-07-11 17:00,,2007-09-08 08:01,2007-10-21 08:01,,PT_Normal,,,,,fY8gi+5ySAaigRFWQYV11w,rmDjVL9hmUqgfdLUq+0xeB,,,N,0,0,,,2007-02-01 02:41,2007-02-04 01:00,hbe4678,hbe4678,2007-06-21 08:00,2007-07-11 17:00,144
1053,12457234,14517,6815937,13329,1,0,N,N,N,CP_Units,TT_Task,DT_FixedDUR2,RV_OK,TK_NotStart,CO02FS0120,02F Erect Misc Steel,,1064.01666666667,0,144,0,0,0,144,0,0,0,,,,2007-12-16 08:01,2008-01-12 08:01,,2007-06-21 08:00,2007-07-11 17:00,2007-06-21 08:00,2007-07-11 17:00,2007-06-21 08:00,2007-07-11 17:00,,2007-12-16 08:01,2008-01-12 08:01,,PT_Normal,,,,,V7fk66v2S46Rl2o8Aosgbw,V4pdXjMZu02jLEvOZ+ayvh,,,N,0,0,,,2007-02-01 02:41,2007-02-04 01:00,hbe4678,hbe4678,2007-06-21 08:00,2007-07-11 17:00,144
1054,12457235,14517,6815937,13329,1,0,N,N,N,CP_Units,TT_Task,DT_FixedDUR2,RV_OK,TK_NotStart,CO02JS0110,02J Erect Structural Steel -  Structure,,784.016666666667,0,96,0,0,0,96,0,0,0,,,,2007-11-05 08:01,2007-11-19 08:01,,2007-06-21 08:00,2007-07-04 17:00,2007-06-21 08:00,2007-07-04 17:00,2007-06-21 08:00,2007-07-04 17:00,,2007-11-05 08:01,2007-11-19 08:01,,PT_Normal,,,,,8QVe8sPER3qZnMsHcakuqA,IHivGCLKGkOos1toDGF+Yx,,,N,0,0,,,2007-02-01 02:41,2007-02-04 01:00,hbe4678,hbe4678,2007-06-21 08:00,2007-07-04 17:00,96
1055,12457236,14517,6815937,13329,1,0,N,N,N,CP_Units,TT_Task,DT_FixedDUR2,RV_OK,TK_NotStart,CO02JS0120,02J Erect Misc Steel -  Structure,,784.016666666667,0,48,0,0,0,48,0,0,0,,,,2007-11-19 08:01,2007-11-26 08:01,,2007-07-05 08:00,2007-07-11 17:00,2007-07-05 08:00,2007-07-11 17:00,2007-07-05 08:00,2007-07-11 17:00,,2007-11-19 08:01,2007-11-26 08:01,,PT_Normal,,,,,Eq3Yvn46So+/R9u6Wonngg,fInDGSJ2HUWoo8Ozf/shjx,,,N,0,0,,,2007-02-01 02:41,2007-02-04 01:00,hbe4678,hbe4678,2007-07-05 08:00,2007-07-11 17:00,48
1056,12457237,14517,6815937,13329,1,0,N,N,N,CP_Units,TT_Task,DT_FixedDUR2,RV_OK,TK_NotStart,CO02JS0130,02J Pre-Install Misc Steel - 104-D2,,824,375.983333333333,96,0,0,0,96,0,0,0,,,,2007-07-29 08:01,2007-08-12 08:01,,2007-03-31 08:01,2007-04-14 08:01,2007-03-31 08:01,2007-04-14 08:01,2007-03-31 08:01,2007-04-14 08:01,,2007-07-29 08:01,2007-08-12 08:01,,PT_Normal,,,,,VgZlZ9X0TUaMPrBfBx1Evg,3rJ/1BGQCUa575mT8D9YmB,,,N,0,0,,,2007-02-01 02:41,2007-02-04 01:00,hbe4678,hbe4678,2007-03-31 08:01,2007-04-14 08:01,96
1057,12457238,14517,6815938,13329,1,0,N,N,N,CP_Units,TT_Task,DT_FixedDUR2,RV_OK,TK_NotStart,CO02YC0130,02Y Install Paving,,568,704,320,0,0,0,320,0,0,0,,,,2007-05-23 08:00,2007-07-08 17:00,,2007-03-01 08:00,2007-04-16 17:00,2007-03-01 08:00,2007-04-16 17:00,2007-03-01 08:00,2007-04-16 17:00,,2007-05-23 08:00,2007-07-08 17:00,,PT_Normal,,,,,TfDd/upUSCOm7VdKu5i7Xw,u98F9Qob1UOevibOhMY7vB,,,N,0,0,,,2007-02-01 02:41,2007-02-01 02:43,hbe4678,hbe4678,2007-03-01 08:00,2007-04-16 17:00,320
1058,12457239,14517,6815938,13329,1,0,N,N,N,CP_Units,TT_Task,DT_FixedDUR2,RV_OK,TK_NotStart,CO02HC0130,02H Install Paving,,960.016666666667,840,96,0,0,0,96,0,0,0,,,,2007-09-29 08:01,2007-10-27 08:01,,2007-05-03 08:00,2007-05-16 17:00,2007-05-03 08:00,2007-05-16 17:00,2007-05-03 08:00,2007-05-16 17:00,,2007-09-29 08:01,2007-10-27 08:01,,PT_Normal,,,,,WKb4lYFuTEePpglISCQgzw,mtMLSHLWD0qeVBFm35/dtx,,,N,0,0,,,2007-02-01 02:41,2007-02-04 01:00,hbe4678,hbe4678,2007-05-03 08:00,2007-05-16 17:00,96
1059,12457240,14517,6815938,13329,1,0,N,N,N,CP_Units,TT_Task,DT_FixedDUR2,RV_OK,TK_NotStart,CO02CC0130,02C Install Paving,,1296.01666666667,592,96,0,0,0,96,0,0,0,,,,2007-10-20 08:01,2007-11-03 08:01,,2007-03-22 08:00,2007-04-04 17:00,2007-03-22 08:00,2007-04-04 17:00,2007-03-22 08:00,2007-04-04 17:00,,2007-10-20 08:01,2007-11-03 08:01,,PT_Normal,,,,,6pBHlIHySaGtp6O0tzOagA,+q91ZK75pkmwIAt6kafrsx,,,N,0,0,,,2007-02-01 02:41,2007-02-04 01:00,hbe4678,hbe4678,2007-03-22 08:00,2007-04-04 17:00,96
1060,12457241,14517,6815938,13329,1,0,N,N,N,CP_Units,TT_Task,DT_FixedDUR2,RV_OK,TK_NotStart,CO02FC0130,02F Install Paving,,1384.01666666667,280,48,0,0,0,48,0,0,0,2007-05-26 08:00,,,2008-01-10 08:01,2008-01-17 08:01,,2007-05-26 08:00,2007-05-31 17:00,2007-05-26 08:00,2007-05-31 17:00,2007-05-26 08:00,2007-05-31 17:00,,2008-01-10 08:01,2008-01-17 08:01,CS_MSOA,PT_Normal,,,,,JyeVFeVYSH6YEBxgS5h/9g,oxg5qpMGSE++Nbz4zumCwR,,,N,0,0,,,2007-02-01 02:41,2007-02-04 01:00,hbe4678,hbe4678,2007-05-26 08:00,2007-05-31 17:00,48
1061,12457242,14517,6815938,13329,1,0,N,N,N,CP_Units,TT_Task,DT_FixedDUR2,RV_OK,TK_NotStart,CO02GC0130,02G Install Paving,,1272.01666666667,408.016666666667,96,0,0,0,96,0,0,0,,,,2007-11-06 08:01,2007-11-20 08:01,,2007-04-12 08:00,2007-04-25 17:00,2007-04-12 08:00,2007-04-25 17:00,2007-04-12 08:00,2007-04-25 17:00,,2007-11-06 08:01,2007-11-20 08:01,,PT_Normal,,,,,xaLVpi9wSoKSND1skNvfDg,FG4UnZEJP0eiKfSGcZhc9B,,,N,0,0,,,2007-02-01 02:41,2007-02-04 01:05,hbe4678,hbe4678,2007-04-12 08:00,2007-04-25 17:00,96
1062,12457243,14517,6815938,13329,1,0,N,N,N,CP_Units,TT_Task,DT_FixedDUR2,RV_OK,TK_NotStart,CO02JC0130,02J Install Paving,,1344.01666666667,424,48,0,0,0,48,0,0,0,2007-05-05 08:00,,,2007-12-09 08:01,2007-12-16 08:01,,2007-05-05 08:00,2007-05-10 17:00,2007-05-05 08:00,2007-05-10 17:00,2007-05-05 08:00,2007-05-10 17:00,,2007-12-09 08:01,2007-12-16 08:01,CS_MSOA,PT_Normal,,,,,qsfR6rM1TueSs0kLSg0QJw,ZjHM6MO0ikanQRV94p4/3B,,,N,0,0,,,2007-02-01 02:41,2007-02-04 01:00,hbe4678,hbe4678,2007-05-05 08:00,2007-05-10 17:00,48
1063,12457244,14517,6815938,13329,1,0,N,N,N,CP_Units,TT_Task,DT_FixedDUR2,RV_OK,TK_NotStart,CO02KC0130,02K Install Paving,,1320.01666666667,480.016666666667,48,0,0,0,48,0,0,0,2007-05-12 08:00,,,2007-12-12 08:01,2007-12-25 08:01,,2007-05-12 08:00,2007-05-17 17:00,2007-05-12 08:00,2007-05-17 17:00,2007-05-12 08:00,2007-05-17 17:00,,2007-12-12 08:01,2007-12-25 08:01,CS_MSOA,PT_Normal,,,,,tRXy5UnxRAClXckW35WmAQ,0fSUP8VKWUazaBJwdcb9Xx,,,N,0,0,,,2007-02-01 02:41,2007-02-04 01:00,hbe4678,hbe4678,2007-05-12 08:00,2007-05-17 17:00,48
1064,12457245,14517,6815938,13329,1,0,N,N,N,CP_Units,TT_Task,DT_FixedDUR2,RV_OK,TK_NotStart,CO02MC0130,02M Install Paving,,1376.01666666667,232,48,0,0,0,48,0,0,0,2007-06-02 08:00,,,2008-01-16 08:01,2008-01-23 08:01,,2007-06-02 08:00,2007-06-07 17:00,2007-06-02 08:00,2007-06-07 17:00,2007-06-02 08:00,2007-06-07 17:00,,2008-01-16 08:01,2008-01-23 08:01,CS_MSOA,PT_Normal,,,,,jdbM8nf3Q2KrTAd6s3S+mw,qM6Sex0m0EeSYkHzdt64Rx,,,N,0,0,,,2007-02-01 02:41,2007-02-04 01:00,hbe4678,hbe4678,2007-06-02 08:00,2007-06-07 17:00,48
1065,12457246,14517,6815938,13329,1,0,N,N,N,CP_Units,TT_Task,DT_FixedDUR2,RV_OK,TK_NotStart,CO02AC0130,02A Install Paving,,1512.01666666667,648,48,0,0,0,48,0,0,0,,,,2007-12-27 08:01,2008-01-03 08:01,,2007-04-23 08:00,2007-04-29 17:00,2007-04-23 08:00,2007-04-29 17:00,2007-04-23 08:00,2007-04-29 17:00,,2007-12-27 08:01,2008-01-03 08:01,,PT_Normal,,,,,NfiSvYEeQHiJbWHx3nVewg,+q91ZK75pkmwIAt6kafrsx,,,N,0,0,,,2007-02-01 02:41,2007-02-04 01:00,hbe4678,hbe4678,2007-04-23 08:00,2007-04-29 17:00,48
1066,12457247,14517,6815938,13329,1,0,N,N,N,CP_Units,TT_Task,DT_FixedDUR2,RV_OK,TK_NotStart,CO02LC0130,02L Install Paving,,984.016666666667,624,96,0,0,0,96,0,0,0,,,,2007-08-13 08:01,2007-08-27 08:01,,2007-03-22 08:00,2007-04-04 17:00,2007-03-22 08:00,2007-04-04 17:00,2007-03-22 08:00,2007-04-04 17:00,,2007-08-13 08:01,2007-08-27 08:01,,PT_Normal,,,,,exsf/PQORpmpmluQPBqL/A,,,,N,0,0,,,2007-02-01 02:41,2007-02-04 01:00,hbe4678,hbe4678,2007-03-22 08:00,2007-04-04 17:00,96
1067,12457248,14517,6815938,13329,1,0,N,N,N,CP_Units,TT_Task,DT_FixedDUR2,RV_OK,TK_NotStart,CO02BC0130,02B Install Paving,,1680.01666666667,136,48,0,0,0,48,0,0,0,2007-06-16 08:00,,,2008-03-15 08:01,2008-03-22 08:01,,2007-06-16 08:00,2007-06-21 17:00,2007-06-16 08:00,2007-06-21 17:00,2007-06-16 08:00,2007-06-21 17:00,,2008-03-15 08:01,2008-03-22 08:01,CS_MSOA,PT_Normal,,,,,z30Y68zOQKyw/r7O+YImIg,4F5r4nF3q0KNKRR65P/+vB,,,N,0,0,,,2007-02-01 02:41,2007-02-04 01:00,hbe4678,hbe4678,2007-06-16 08:00,2007-06-21 17:00,48
1068,12457249,14517,6815938,13329,1,0,N,N,N,CP_Units,TT_Task,DT_FixedDUR2,RV_OK,TK_NotStart,CO02DC0130,02D Install Paving,,1400,232,48,0,0,0,48,0,0,0,2007-06-09 08:00,,,2008-01-27 08:00,2008-02-02 17:00,,2007-06-09 08:00,2007-06-14 17:00,2007-06-09 08:00,2007-06-14 17:00,2007-06-09 08:00,2007-06-14 17:00,,2008-01-27 08:00,2008-02-02 17:00,CS_MSOA,PT_Normal,,,,,zN9eiCGmSrK49kv9r/buOQ,mKv4FL8FRk23CkOYuF1mvh,,,N,0,0,,,2007-02-01 02:41,2007-02-01 02:43,hbe4678,hbe4678,2007-06-09 08:00,2007-06-14 17:00,48
1069,12457250,14517,6815938,13329,1,0,N,N,N,CP_Units,TT_Task,DT_FixedDUR2,RV_OK,TK_NotStart,CO02EC0130,02E Install Paving,,1376.01666666667,328,48,0,0,0,48,0,0,0,2007-05-19 08:00,,,2008-01-02 08:01,2008-01-09 08:01,,2007-05-19 08:00,2007-05-24 17:00,2007-05-19 08:00,2007-05-24 17:00,2007-05-19 08:00,2007-05-24 17:00,,2008-01-02 08:01,2008-01-09 08:01,CS_MSOA,PT_Normal,,,,,glTsryfQSvyJGOvsdYKiiQ,Jz4FGnrYgE+TjF5gZkgIAx,,,N,0,0,,,2007-02-01 02:41,2007-02-04 01:00,hbe4678,hbe4678,2007-05-19 08:00,2007-05-24 17:00,48
1070,12457251,14517,6815938,13329,1,0,N,N,N,CP_Units,TT_WBS,DT_FixedDUR2,RV_OK,TK_NotStart,WO020C0110,020 Concrete Paving,1355,1680.01666666667,4352,776,0,56600.17,56600.17,776,0,0,0,,,,2007-05-23 08:00,2008-03-22 08:01,,2007-03-01 08:00,2007-06-21 17:00,2007-03-01 08:00,2007-06-21 17:00,2007-03-01 08:00,2007-06-21 17:00,,2007-05-23 08:00,2008-03-22 08:01,,PT_Normal,,,,,bKKl8HWSTwOIncFcsjjr2Q,i+9hk7pVRImy6fh05MII4Q,,,N,0,0,,,2007-02-01 02:41,2007-02-04 01:05,hbe4678,hbe4678,2007-03-01 08:00,2007-06-21 17:00,776
1071,12457252,14517,6815939,13329,0,0,N,N,N,CP_Units,TT_Mile,DT_FixedDrtn,RV_OK,TK_NotStart,CO02HM0135,02H Give 30 Day notice to Manufacture Refractory (103-D),,-319.983333333333,0,0,0,0,0,0,0,0,0,,,,2007-02-27 08:01,2007-02-27 08:01,,2007-04-15 08:00,2007-04-15 08:00,2007-04-15 08:00,2007-04-15 08:00,2007-04-15 08:00,2007-04-15 08:00,,2007-02-27 08:01,2007-02-27 08:01,CS_ALAP,PT_Normal,,,,,pKjVV34wRv6fNhcTCjuftA,AcyXVLGdHEGIWEHiGXvifR,,,N,0,0,,,2007-02-01 02:41,2007-02-04 01:05,hbe4678,hbe4678,2007-04-15 08:00,2007-04-15 08:00,0
1072,12457253,14517,6815939,13329,1,100,N,N,N,CP_Units,TT_Task,DT_FixedDUR2,RV_OK,TK_Complete,CO010K0120,010 Construct Perimeter Roads,1351,,,0,0,0,0,544,0,0,0,,2006-05-15 08:00,2006-05-31 17:00,2007-12-11 08:01,2007-12-11 08:01,,2007-01-27 08:00,2007-01-27 08:00,,,2006-05-15 08:00,2006-08-01 17:00,,,,,PT_Normal,,,,,5T5YMVx0Qa2rABnRHbqcnw,8PxrNjTuo0e0mCxKQpCK8x,,,N,0,0,,,2007-02-01 02:41,2007-02-04 01:05,hbe4678,hbe4678,,,0
1073,12457254,14517,6815939,13330,1,100,N,N,N,CP_Units,TT_Task,DT_FixedDUR2,RV_OK,TK_Complete,EK000CK010,OCI Meeting to Define custom clearance requests,,,,0,0,0,0,120,0,0,0,,2005-06-20 00:00,2005-07-20 00:00,2006-12-25 08:00,2006-12-25 08:00,,2007-01-27 00:00,2007-01-27 00:00,,,2005-06-03 08:00,2005-06-23 17:00,,,,,PT_Normal,,,,,HUiHStD7QJ61roOImkwBDA,,,,N,0,0,,,2007-02-01 02:41,2007-02-04 01:05,hbe4678,hbe4678,,,0
1074,12457255,14517,6815939,13329,1,100,N,N,N,CP_Units,TT_Task,DT_FixedDUR2,RV_OK,TK_Complete,CO000CK110,Set-Up KBR Pipe Fab Shop,,,,0,0,0,0,440,0,0,0,,2006-04-24 00:00,2006-10-31 00:00,2007-02-27 08:00,2007-02-27 08:00,,2007-01-27 00:00,2007-01-27 00:00,,,2006-05-13 08:00,2006-07-15 17:00,,,,,PT_Normal,,,,,6sg0MIB3QzG39OIqepiATw,9xDoMEuBhE6XPmphS2eIaB,,,N,0,0,,,2007-02-01 02:41,2007-02-04 01:05,hbe4678,hbe4678,,,0
1075,12457256,14517,6815939,13329,0,100,N,N,N,CP_Units,TT_Mile,DT_FixedDrtn,RV_OK,TK_Complete,CO000K0100,Start Construction,,,,0,0,0,0,0,0,0,0,,2006-05-01 00:00,2006-05-01 00:00,2006-11-21 08:01,2006-11-21 08:01,,2007-01-27 00:00,2007-01-27 00:00,,,2006-06-01 08:01,2006-06-01 08:01,,,,,PT_Normal,,,,,eJby/SvASpuKCiQJXO7xGA,O2vo6BYbe0qd6MCff69n8h,,,Y,0,0,,,2007-02-01 02:41,2007-02-04 01:05,hbe4678,hbe4678,,,0
1076,12457257,14517,6815939,13330,1,100,N,N,N,CP_Units,TT_Task,DT_FixedDUR2,RV_OK,TK_Complete,EK000CV038,Select Geotech Vendor / Issue Award,,,,0,0,0,0,200,0,0,0,,2005-06-20 00:00,2005-09-16 17:00,2006-12-25 08:00,2006-12-25 08:00,,2007-01-27 00:00,2007-01-27 00:00,,,2005-06-03 08:00,2005-07-11 17:00,,,,,PT_Normal,,,,,xF0IXYxjRP6h8GQR1Cpgqg,+OdeCidYLEuDFxkfA1ANxh,,,N,0,0,,,2007-02-01 02:41,2007-02-04 01:05,hbe4678,hbe4678,,,0
1077,12457258,14517,6815939,13329,1,100,N,N,N,CP_Units,TT_Task,DT_FixedDUR2,RV_OK,TK_Complete,EK000CV039,Geotech Conducts Soil Borings / Draft Prelim Report,,,,0,0,0,0,400,0,0,0,,2005-09-24 00:00,2006-01-16 17:00,2006-12-25 08:00,2006-12-25 08:00,,2007-01-27 00:00,2007-01-27 00:00,,,2005-09-17 08:00,2005-11-28 17:00,,,,,PT_Normal,,,,,qEWwNIkQTUWwRvzaeibeBw,+OdeCidYLEuDFxkfA1ANxh,,,N,0,0,,,2007-02-01 02:41,2007-02-04 01:05,hbe4678,hbe4678,,,0
1078,12457259,14517,6815939,13329,0,100,N,N,N,CP_Units,TT_Mile,DT_FixedDrtn,RV_OK,TK_Complete,CO000K0108,Start Foundations -  Field Fab Tanks,,,,0,0,0,0,0,0,0,0,,2006-05-10 00:00,2006-05-10 00:00,2007-02-06 08:01,2007-02-06 08:01,,2007-01-27 00:00,2007-01-27 00:00,,,2006-06-15 08:00,2006-06-15 08:00,,,,,PT_Normal,,,,,VRTke70vQgiJxcdf9xgR1g,WkbIf5w2n0S06WtBtHestx,,,N,0,0,,,2007-02-01 02:41,2007-02-04 01:05,hbe4678,hbe4678,,,0
1079,12457260,14517,6815939,13329,0,100,N,N,N,CP_Units,TT_Mile,DT_FixedDrtn,RV_OK,TK_Complete,CO000K0110,Start Foundations -  Equipment & Piperacks,,,,0,0,0,0,0,0,0,0,,2006-05-10 00:00,2006-05-10 00:00,2006-12-25 08:00,2006-12-25 08:00,,2007-01-27 00:00,2007-01-27 00:00,,,2006-06-03 08:01,2006-06-03 08:01,,,,,PT_Normal,,,,,YEurMcXfSyS6GmeWk5LefA,B4r45sK+fkWIZMVjCQdttx,,,N,0,0,,,2007-02-01 02:41,2007-02-04 01:05,hbe4678,hbe4678,,,0
1080,12457261,14517,6815939,13330,1,100,N,N,N,CP_Units,TT_Task,DT_FixedDUR2,RV_OK,TK_Complete,CK000YA306,Establish Tax Free Zone Status,,,,0,0,0,0,360,0,0,0,,2006-01-13 00:00,2006-03-03 00:00,2006-12-25 08:00,2006-12-25 08:00,,2007-01-27 00:00,2007-01-27 00:00,,,2006-03-20 08:00,2006-05-19 17:00,,,,,PT_Normal,,,,,22nNbGWcSRWJmDNEWJ4Hkg,,,,N,0,0,,,2007-02-01 02:41,2007-02-04 01:05,hbe4678,hbe4678,,,0
1081,12457262,14517,6815939,13332,1,0,N,N,N,CP_Units,TT_Task,DT_FixedDrtn,RV_OK,TK_NotStart,SC000YA100,Construction Bonus Period,,-471.983333333333,0,1392,0,0,0,1400,0,0,0,2008-08-25 08:00,,,2008-08-25 08:01,2009-02-15 08:01,,2008-10-23 08:00,2009-04-14 17:00,2008-10-23 08:00,2009-04-14 17:00,2008-10-23 08:00,2009-04-15 17:00,,2008-08-25 08:01,2009-02-15 08:01,CS_MSOA,PT_Normal,,,,,/w1OsJz1QnSvUw/g4v3AxQ,B4r45sK+fkWIZMVjCQdttx,,,Y,0,0,,,2007-02-01 02:41,2007-02-04 01:05,hbe4678,hbe4678,2008-10-23 08:00,2009-04-14 17:00,1392
1082,12457263,14517,6815939,13332,0,100,N,N,N,CP_Drtn,TT_FinMile,DT_FixedDrtn,RV_OK,TK_Complete,EK000GE150,Execute OCI Subcontract (KBR),,,,0,0,0,0,0,0,0,0,,2005-12-17 00:00,2005-12-17 00:00,2006-12-25 08:00,2006-12-25 08:00,,2007-01-27 00:00,2007-01-27 00:00,,,2005-12-17 08:01,2005-12-17 08:01,,,,,PT_Normal,,,,,JaK8F+f5SouESqqIoBMB9A,nNEoegedhEKBJcP3r7NqLR,,,N,0,0,,,2007-02-01 02:41,2007-02-04 01:05,hbe4678,hbe4678,,,0
1083,12457264,14517,6815939,13332,0,100,N,N,N,CP_Drtn,TT_Mile,DT_FixedDrtn,RV_OK,TK_Complete,CO000GE105,Commence Admin. Building Design (OCI),,,,0,0,0,0,0,0,0,0,,2005-11-04 08:00,2005-11-04 08:00,2007-01-10 08:00,2007-01-10 08:00,,2007-01-27 00:00,2007-01-27 00:00,,,2005-11-04 08:00,2005-11-04 08:00,,,,,PT_Normal,,,,,N+Y9EUGZQ2Ca2nDEdP5jlg,nNEoegedhEKBJcP3r7NqLR,,,N,0,0,,,2007-02-01 02:41,2007-02-04 01:05,hbe4678,hbe4678,,,0
1084,12457265,14517,6815939,13332,0,100,N,N,N,CP_Drtn,TT_FinMile,DT_FixedDrtn,RV_OK,TK_Complete,EK000GE170,"Issue Material Supply PO to OCI (Elect, Struct, Insul)",,,,0,0,0,0,0,0,0,0,,2006-01-11 00:00,2006-01-11 00:00,2007-05-21 08:01,2007-05-21 08:01,,2007-01-27 00:00,2007-01-27 00:00,,,2006-02-16 08:01,2006-02-16 08:01,,,,,PT_Normal,,,,,l9IajTNiQ+OVYOgej0Jqkw,LrxZLyfgaU6HQ0K3O7MG3h,,,N,0,0,,,2007-02-01 02:41,2007-02-04 01:05,hbe4678,hbe4678,,,0
1085,12457266,14517,6815939,13329,1,100,N,N,N,CP_Units,TT_Task,DT_FixedDUR2,RV_OK,TK_Complete,CO000A0150,Install Guard Towers,,,,0,0,0,0,120,0,0,0,,2006-05-02 00:00,2006-05-15 00:00,2007-02-27 08:00,2007-02-27 08:00,,2007-01-27 08:00,2007-01-27 08:00,,,2006-05-16 08:00,2006-06-01 17:00,,,,,PT_Normal,,,,,CqcAmyKVRYaoAKPZmBgTjw,9xDoMEuBhE6XPmphS2eIaB,,,N,0,0,,,2007-02-01 02:41,2007-02-04 01:05,hbe4678,hbe4678,,,0
1086,12457267,14517,6815939,13329,0,100,N,N,N,CP_Units,TT_Mile,DT_FixedDrtn,RV_OK,TK_Complete,CO000A0110,"Start Buildings - Admin, Canteen, Warehouse, Control",,,,0,0,0,0,0,0,0,0,,2006-05-01 00:00,2006-05-01 00:00,2007-01-10 08:00,2007-01-10 08:00,,2007-01-27 00:00,2007-01-27 00:00,,,2006-06-03 08:01,2006-06-03 08:01,,,,,PT_Normal,,,,,s89AvjCHQUGZUjUGNawYkA,m6Z6XQ9mbkGcFMAru1PFMh,,,N,0,0,,,2007-02-01 02:41,2007-02-04 01:05,hbe4678,hbe4678,,,0
1087,12457268,14517,6815939,13329,0,100,N,N,N,CP_Units,TT_Mile,DT_FixedDrtn,RV_OK,TK_Complete,CO000M0100,Commence Engineering -  Field Fab Tanks,,,,0,0,0,0,0,0,0,0,,2006-02-04 00:00,2006-02-04 00:00,2007-02-06 08:01,2007-02-06 08:01,,2007-01-27 00:00,2007-01-27 00:00,,,2006-02-13 08:01,2006-02-13 08:01,,,,,PT_Normal,,,,,FGk1VqZ0TPOjUqkuNrn6/Q,O2vo6BYbe0qd6MCff69n8h,,,N,0,0,,,2007-02-01 02:41,2007-02-04 01:05,hbe4678,hbe4678,,,0
1088,12457269,14517,6815939,13329,1,100,N,N,N,CP_Units,TT_Task,DT_FixedDrtn,RV_OK,TK_Complete,CO000M0110,Mobilize Field Fab Tank Contractor,,,,0,0,0,0,224,0,0,0,,2006-06-20 00:00,2006-08-12 08:00,2007-02-06 08:01,2007-02-06 08:01,,2007-01-27 00:00,2007-01-27 00:00,,,2006-06-24 08:00,2006-07-25 17:00,,,,,PT_Normal,,,,,oAs3xu3QReq6h3zKOiBX/w,LPVCUkJp5k6SJBQtU2Hz8B,,,N,0,0,,,2007-02-01 02:41,2007-02-04 01:05,hbe4678,hbe4678,,,0
1089,12457270,14517,6815939,13330,1,100,N,N,N,CP_Units,TT_Task,DT_FixedDUR2,RV_OK,TK_Complete,EK000CK015,Define OCI's Point of Delivery & Liability,,,,0,0,0,0,120,0,0,0,,2005-06-20 00:00,2005-07-20 00:00,2006-12-25 08:00,2006-12-25 08:00,,2007-01-27 00:00,2007-01-27 00:00,,,2005-06-03 08:00,2005-06-23 17:00,,,,,PT_Normal,,,,,73au1zFwQ02EDD+gal2vfg,,,,N,0,0,,,2007-02-01 02:41,2007-02-04 01:05,hbe4678,hbe4678,,,0
1090,12457271,14517,6815939,13330,1,100,N,N,N,CP_Units,TT_Task,DT_FixedDUR2,RV_OK,TK_Complete,EK000CK060,"Locate tie in pnts for temp water, phone, & pwr",,,,0,,0,,120,,,0,,2005-03-28 08:00,2005-04-15 17:00,2009-02-15 08:01,2009-02-15 08:01,,2007-01-27 00:00,2007-01-27 00:00,,,2005-03-28 08:00,2005-04-15 17:00,,,,,PT_Normal,,,,,15eZLWHqRXqYGRn+mw76Dw,,,,N,,,,,2007-02-01 02:41,2007-02-04 01:05,hbe4678,hbe4678,,,0
1091,12457272,14517,6815939,13330,1,100,N,N,N,CP_Units,TT_Task,DT_FixedDUR2,RV_OK,TK_Complete,EK000CK065,Compl. Layout of Temp. Facil. (including OCI),,,,0,0,0,,360,,0,0,,2005-02-28 08:00,2005-10-31 17:00,2009-02-15 08:01,2009-02-15 08:01,,2007-01-27 00:00,2007-01-27 00:00,,,2005-02-28 08:00,2005-04-29 17:00,,,,,PT_Normal,,,,,5YzWDY1YREG0QS5P1Hsucg,,,,N,0,0,,,2007-02-01 02:41,2007-02-04 01:05,hbe4678,hbe4678,,,0
1092,12457273,14517,6815939,13330,1,100,N,N,N,CP_Units,TT_Task,DT_FixedDUR2,RV_OK,TK_Complete,EK000CK075,Review Tech & Commercial Proposal - Field Fab Tank,,,,0,0,0,,328,,0,0,,2005-03-18 08:00,2005-11-01 17:00,2009-02-15 08:01,2009-02-15 08:01,,2007-01-27 00:00,2007-01-27 00:00,,,2005-03-18 08:00,2005-05-13 17:00,,,,,PT_Normal,,,,,zfvvY+PHRVarUQV+zVpEkw,,,,N,0,0,,,2007-02-01 02:41,2007-02-04 01:05,hbe4678,hbe4678,,,0
1093,12457274,14517,6815939,13330,1,100,N,N,N,CP_Units,TT_Task,DT_FixedDUR2,RV_OK,TK_Complete,EK000CK100,Site Visit - Construction,,,,0,,0,,120,,,0,,2005-03-28 08:00,2005-04-15 17:00,2006-12-25 08:00,2006-12-25 08:00,,2007-01-27 00:00,2007-01-27 00:00,,,2005-03-28 08:00,2005-04-15 17:00,,,,,PT_Normal,,,,,jAQsErMzT1u/YSKFbnwLZw,,,,N,,,,,2007-02-01 02:41,2007-02-04 01:05,hbe4678,hbe4678,,,0
1094,12457275,14517,6815939,13329,1,100,N,N,N,CP_Units,TT_Task,DT_FixedDUR2,RV_OK,TK_Complete,CO000K0106,Mobilize Temporary Facilities (& Punchlist & Perm. Power),,,,0,0,0,0,1056,0,0,0,,2005-12-10 00:00,2006-10-31 00:00,2009-02-15 08:01,2009-02-15 08:01,,2007-01-27 00:00,2007-01-27 00:00,,,2006-02-25 08:01,2006-07-29 08:01,,,,,PT_Normal,,,,,xUl8M3YORB+Nbav0FV2W1Q,,,,N,0,0,,,2007-02-01 02:41,2007-02-04 01:05,hbe4678,hbe4678,,,0
1095,12457276,14517,6815939,13330,1,100,N,N,N,CP_Units,TT_Task,DT_FixedDUR2,RV_OK,TK_Complete,EK000CK005,OCI Subcontract - Executed,,,,0,0,0,,80,,0,0,,2005-04-18 08:00,2005-12-19 17:00,2006-12-25 08:00,2006-12-25 08:00,,2007-01-27 00:00,2007-01-27 00:00,,,2005-04-18 08:00,2005-04-29 17:00,,,,,PT_Normal,,,,,5USpGDb6SoKemYbMrNJQIw,,,,N,0,0,,,2007-02-01 02:41,2007-02-04 01:05,hbe4678,hbe4678,,,0
1096,12457277,14517,6815945,13332,1,0,N,N,N,CP_Units,TT_Task,DT_FixedDUR2,RV_OK,TK_NotStart,SC000T0110,Performance Test Period,,-471.983333333333,0,720,0,0,0,720,0,0,0,,,,2008-05-27 08:01,2008-08-25 08:01,,2008-07-25 08:00,2008-10-22 17:00,2008-07-25 08:00,2008-10-22 17:00,2008-07-25 08:00,2008-10-22 17:00,,2008-05-27 08:01,2008-08-25 08:01,,PT_Normal,,,,,BJUwsFeeST6gZzsE64gjkA,9xDoMEuBhE6XPmphS2eIaB,,,Y,0,0,,,2007-02-01 02:41,2007-02-04 01:05,hbe4678,hbe4678,2008-07-25 08:00,2008-10-22 17:00,720
1097,12457278,14517,6815945,13332,1,0,N,N,N,CP_Units,TT_Task,DT_FixedDUR2,RV_OK,TK_NotStart,SC01DT0130,01D Commission,,-375.983333333333,0,336,0,0,0,336,0,0,0,,,,2007-12-11 08:01,2008-01-22 08:01,,2008-01-27 08:00,2008-03-08 17:00,2008-01-27 08:00,2008-03-08 17:00,2008-01-27 08:00,2008-03-08 17:00,,2007-12-11 08:01,2008-01-22 08:01,,PT_Normal,,,,,eqGz68nkSUmdrQBM6CwaXw,LhO0ALDlkEiDshLBr6qw5h,,,N,0,0,,,2007-02-01 02:41,2007-02-04 01:00,hbe4678,hbe4678,2008-01-27 08:00,2008-03-08 17:00,336
1098,12457279,14517,6815945,13332,1,0,N,N,N,CP_Units,TT_Task,DT_FixedDUR2,RV_OK,TK_NotStart,SC03FT0130,03F Commission,,-375.983333333333,0,168,0,0,0,168,0,0,0,,,,2008-01-22 08:01,2008-02-12 08:01,,2008-03-09 08:00,2008-03-29 17:00,2008-03-09 08:00,2008-03-29 17:00,2008-03-09 08:00,2008-03-29 17:00,,2008-01-22 08:01,2008-02-12 08:01,,PT_Normal,,,,,sG/EEijXTc2ysgyPlJ14aQ,jt45OyA93EK3ctfjYQfXLh,,,N,0,0,,,2007-02-01 02:41,2007-02-04 01:00,hbe4678,hbe4678,2008-03-09 08:00,2008-03-29 17:00,168
1099,12457280,14517,6815945,13332,1,0,N,N,N,CP_Units,TT_Task,DT_FixedDUR2,RV_OK,TK_NotStart,SC000T0100,020 Commission ISBL,,-375.983333333333,0,480,0,0,0,480,0,0,0,,,,2008-02-12 08:01,2008-04-12 08:01,,2008-03-30 08:00,2008-05-28 17:00,2008-03-30 08:00,2008-05-28 17:00,2008-03-30 08:00,2008-05-28 17:00,,2008-02-12 08:01,2008-04-12 08:01,,PT_Normal,,,,,977dkD72Riq8hu3rjz5uOQ,R3PZsy9MYEerGLu48Y0gkh,,,N,0,0,,,2007-02-01 02:41,2007-02-04 01:00,hbe4678,hbe4678,2008-03-30 08:00,2008-05-28 17:00,480
1100,12457281,14517,6815945,13332,1,0,N,N,N,CP_Units,TT_Task,DT_FixedDUR2,RV_OK,TK_NotStart,SC03AT0130,03A Commission,,-375.983333333333,0,56,0,0,0,56,0,0,0,,,,2007-12-04 08:01,2007-12-11 08:01,,2008-01-20 08:00,2008-01-26 17:00,2008-01-20 08:00,2008-01-26 17:00,2008-01-20 08:00,2008-01-26 17:00,,2007-12-04 08:01,2007-12-11 08:01,,PT_Normal,,,,,nWxmDxEhQ3isVApMprEhZg,YFRyIv5310mH00eZCCcW5R,,,N,0,0,,,2007-02-01 02:41,2007-02-04 01:00,hbe4678,hbe4678,2008-01-20 08:00,2008-01-26 17:00,56
1101,12457282,14517,6815945,13332,1,0,N,N,N,CP_Units,TT_Task,DT_FixedDUR2,RV_OK,TK_NotStart,SC000T0105,020 Startup ISBL,,-471.983333333333,0,360,0,0,0,240,0,0,0,,,,2008-04-12 08:01,2008-05-27 08:01,,2008-06-10 08:00,2008-07-24 17:00,2008-06-10 08:00,2008-07-24 17:00,2008-06-10 08:00,2008-07-09 17:00,,2008-04-12 08:01,2008-05-27 08:01,,PT_Normal,,,,,2K7uQCptTLWflbSQ05YXYg,KGp967tc2USnhNUzs91Y1R,,,Y,0,0,,,2007-02-01 02:41,2007-02-04 01:05,hbe4678,hbe4678,2008-06-10 08:00,2008-07-24 17:00,360
1102,12457283,14517,6815945,13332,1,0,N,N,N,CP_Units,TT_WBS,DT_FixedDUR2,RV_OK,TK_NotStart,WC000T1100,000 Commissioning,4591,-471.983333333333,1392,2328,0,130000,130000,2328,0,0,0,,,,2007-11-23 08:01,2008-08-25 08:01,,2008-01-06 08:00,2008-10-22 17:00,2008-01-06 08:00,2008-10-22 17:00,2008-01-06 08:00,2008-10-22 17:00,,2007-11-23 08:01,2008-08-25 08:01,,PT_Normal,,,,,UiuGLjNUTiSc0JlxWQwh4w,OX5pIRYkJEKm/2H3VAZ7YB,,,N,0,0,,,2007-02-01 02:41,2007-02-04 01:05,hbe4678,hbe4678,2008-01-06 08:00,2008-10-22 17:00,2328
1103,12457284,14517,6815965,13330,0,100,N,N,N,CP_Units,TT_FinMile,DT_FixedDUR2,RV_OK,TK_Complete,EM02NSY272,02N P&IDs & Line List Issue - IFC,,,,0,0,0,0,0,0,0,0,,2006-07-14 17:00,2006-07-14 17:00,2007-10-21 08:01,2007-10-21 08:01,,2007-01-27 00:00,2007-01-27 00:00,,,2006-07-14 17:00,2006-07-14 17:00,,,,,PT_Normal,,,,,qNmlNwowQ6iQ3si57/byNg,iPuXgOgbBkOrV38d9k9/wh,,,N,0,0,,,2007-02-01 02:41,2007-02-04 01:05,hbe4678,hbe4678,,,0
1104,12457285,14517,6815965,13330,0,100,N,N,N,CP_Units,TT_FinMile,DT_FixedDUR2,RV_OK,TK_Complete,EM02PSY272,02P P&IDs & Line List Issue - IFC,,,,0,0,0,0,0,0,0,0,,2006-05-31 00:00,2006-05-31 00:00,2007-12-31 08:01,2007-12-31 08:01,,2007-01-27 00:00,2007-01-27 00:00,,,2006-06-05 08:01,2006-06-05 08:01,,,,,PT_Normal,,,,,kZNbUEiYTUqxpmxMTZ6rmw,jDbnUtERU0a/kFIk8Z4fsh,,,N,0,0,,,2007-02-01 02:41,2007-02-04 01:05,hbe4678,hbe4678,,,0
1105,12457286,14517,6815965,13330,0,100,N,N,N,CP_Units,TT_FinMile,DT_FixedDUR2,RV_OK,TK_Complete,EM02QSY272,02Q P&IDs & Line List Issue - IFC,,,,0,0,0,0,0,0,0,0,,2006-08-21 00:00,2006-08-21 00:00,2007-12-16 08:01,2007-12-16 08:01,,2007-01-27 00:00,2007-01-27 00:00,,,2006-08-28 17:00,2006-08-28 17:00,,,,,PT_Normal,,,,,2EwTDC9lR++7LsrdtHeuuA,wDQllMYWOUOJELWU7eNgph,,,N,0,0,,,2007-02-01 02:41,2007-02-04 01:05,hbe4678,hbe4678,,,0
1106,12457287,14517,6815965,13330,0,100,N,N,N,CP_Units,TT_FinMile,DT_FixedDUR2,RV_OK,TK_Complete,EM02YSY272,02Y P&IDs & Line List Issue - IFC,,,,0,0,0,0,0,0,0,0,,2006-10-03 00:00,2006-10-03 00:00,2007-04-02 08:00,2007-04-02 08:00,,2007-01-27 00:00,2007-01-27 00:00,,,2006-10-18 17:00,2006-10-18 17:00,,,,,PT_Normal,,,,,Tpmw7C4WSreqF1zyRZPZlg,nJOr5hYGqEyTYR5JvhF31R,,,N,0,0,,,2007-02-01 02:41,2007-02-04 01:05,hbe4678,hbe4678,,,0
1107,12457288,14517,6815965,13330,0,100,N,N,N,CP_Units,TT_FinMile,DT_FixedDUR2,RV_OK,TK_Complete,EM02GSY172,02G P&IDs & Line List Issue - IFD,,,,0,0,0,0,0,0,0,0,,2006-08-02 00:00,2006-08-02 00:00,2007-06-07 08:01,2007-06-07 08:01,,2007-01-27 00:00,2007-01-27 00:00,,,2006-08-01 17:00,2006-08-01 17:00,,,,,PT_Normal,,,,,FPR3rskYSk6RKemg+qyguQ,hUu7SCrVF0ObdkxigRGSPR,,,N,0,0,,,2007-02-01 02:41,2007-02-04 01:05,hbe4678,hbe4678,,,0
1108,12457289,14517,6815965,13330,0,100,N,N,N,CP_Units,TT_FinMile,DT_FixedDUR2,RV_OK,TK_Complete,EM02JSY172,02J P&IDs & Line List Issue - IFD,,,,0,0,0,0,0,0,0,0,,2006-06-08 00:00,2006-06-08 00:00,2007-11-26 08:01,2007-11-26 08:01,,2007-01-27 00:00,2007-01-27 00:00,,,2006-06-09 17:00,2006-06-09 17:00,,,,,PT_Normal,,,,,mlKbpt7GR2yqCp4Cfs+Kfg,2EOQIs+RWk2ZF+vhF1OKjR,,,N,0,0,,,2007-02-01 02:41,2007-02-04 01:05,hbe4678,hbe4678,,,0
1109,12457290,14517,6815965,13330,0,100,N,N,N,CP_Units,TT_FinMile,DT_FixedDUR2,RV_OK,TK_Complete,EM02KSY172,02K P&IDs & Line List Issue - IFD,,,,0,0,0,0,0,0,0,0,,2006-07-17 17:00,2006-07-17 17:00,2007-06-18 08:00,2007-06-18 08:00,,2007-01-27 00:00,2007-01-27 00:00,,,2006-07-17 17:00,2006-07-17 17:00,,,,,PT_Normal,,,,,FRRbE9ywSg6tBj7Qui7UIA,pK9jZGT5nU6oRoLrWL4yDB,,,N,0,0,,,2007-02-01 02:41,2007-02-04 01:05,hbe4678,hbe4678,,,0
1110,12457291,14517,6815965,13330,0,100,N,N,N,CP_Units,TT_FinMile,DT_FixedDUR2,RV_OK,TK_Complete,EM02MSY172,02M P&IDs & Line List Issue - IFD,,,,0,0,0,0,0,0,0,0,,2006-06-26 17:00,2006-06-26 17:00,2007-12-04 08:01,2007-12-04 08:01,,2007-01-27 00:00,2007-01-27 00:00,,,2006-06-26 17:00,2006-06-26 17:00,,,,,PT_Normal,,,,,7DELZYssQ2CAIFZ2/M8X6w,aE5aCJbd9kuJyA8FWg+akx,,,N,0,0,,,2007-02-01 02:41,2007-02-04 01:05,hbe4678,hbe4678,,,0
1111,12457292,14517,6815965,13330,0,100,N,N,N,CP_Units,TT_FinMile,DT_FixedDUR2,RV_OK,TK_Complete,EM02NSY172,02N P&IDs & Line List Issue - IFD,,,,0,0,0,0,0,0,0,0,,2006-05-10 17:00,2006-05-10 17:00,2007-05-28 08:01,2007-05-28 08:01,,2007-01-27 00:00,2007-01-27 00:00,,,2006-05-19 17:00,2006-05-19 17:00,,,,,PT_Normal,,,,,97jfGPU5QQeyFZrYKeSiAQ,prGIW0B3GUehe644ubpyoh,,,N,0,0,,,2007-02-01 02:41,2007-02-04 01:05,hbe4678,hbe4678,,,0
1112,12457293,14517,6815965,13330,0,100,N,N,N,CP_Units,TT_FinMile,DT_FixedDUR2,RV_OK,TK_Complete,EM02PSY172,02P P&IDs & Line List Issue - IFD,,,,0,0,0,0,0,0,0,0,,2006-04-19 00:00,2006-04-19 00:00,2007-12-31 08:01,2007-12-31 08:01,,2007-01-27 00:00,2007-01-27 00:00,,,2006-04-20 17:00,2006-04-20 17:00,,,,,PT_Normal,,,,,7t9LRq5mT+2N7xu+t6G7lA,iPuXgOgbBkOrV38d9k9/wh,,,N,0,0,,,2007-02-01 02:41,2007-02-04 01:05,hbe4678,hbe4678,,,0
1113,12457294,14517,6815965,13330,0,100,N,N,N,CP_Units,TT_FinMile,DT_FixedDUR2,RV_OK,TK_Complete,EM02QSY172,02Q P&IDs & Line List Issue - IFD,,,,0,0,0,0,0,0,0,0,,2006-05-26 00:00,2006-05-26 00:00,2007-12-16 08:01,2007-12-16 08:01,,2007-01-27 00:00,2007-01-27 00:00,,,2006-06-14 17:00,2006-06-14 17:00,,,,,PT_Normal,,,,,H671mj09Rxq8Hf32hqdqsQ,jDbnUtERU0a/kFIk8Z4fsh,,,N,0,0,,,2007-02-01 02:41,2007-02-04 01:05,hbe4678,hbe4678,,,0
1114,12457295,14517,6815965,13330,0,100,N,N,N,CP_Units,TT_FinMile,DT_FixedDUR2,RV_OK,TK_Complete,EM02YSY172,02Y P&IDs & Line List Issue - IFD,,,,0,0,0,0,0,0,0,0,,2006-06-02 00:00,2006-06-02 00:00,2007-04-02 08:00,2007-04-02 08:00,,2007-01-27 00:00,2007-01-27 00:00,,,2006-06-05 17:00,2006-06-05 17:00,,,,,PT_Normal,,,,,/W480w/uQpKcXRhTbPCXuw,wDQllMYWOUOJELWU7eNgph,,,N,0,0,,,2007-02-01 02:41,2007-02-04 01:05,hbe4678,hbe4678,,,0
1115,12457296,14517,6815965,13330,0,100,N,N,N,CP_Units,TT_FinMile,DT_FixedDUR2,RV_OK,TK_Complete,EM02CSY172,02C P&IDs & Line List Issue - IFD,,,,0,0,0,0,0,0,0,0,,2006-07-05 00:00,2006-07-05 00:00,2008-02-15 17:00,2008-02-15 17:00,,2007-01-27 00:00,2007-01-27 00:00,,,2006-06-29 17:00,2006-06-29 17:00,,,,,PT_Normal,,,,,RUjumLCiR+uG2v+Rb7G9WQ,8MFTpMHVfEmc5bfuuIRLnh,,,N,0,0,,,2007-02-01 02:41,2007-02-04 01:05,hbe4678,hbe4678,,,0
1116,12457297,14517,6815965,13330,0,100,N,N,N,CP_Units,TT_FinMile,DT_FixedDUR2,RV_OK,TK_Complete,EM02HSY172,02H P&IDs & Line List Issue - IFD,,,,0,0,0,0,0,0,0,0,,2006-07-11 00:00,2006-07-11 00:00,2007-09-06 08:01,2007-09-06 08:01,,2007-01-27 00:00,2007-01-27 00:00,,,2006-07-17 08:01,2006-07-17 08:01,,,,,PT_Normal,,,,,Ltnps2cIQQOSlGE6DFq8sA,uvZV8Hm0rUagil/oo+ujpR,,,N,0,0,,,2007-02-01 02:41,2007-02-04 01:05,hbe4678,hbe4678,,,0
1117,12457298,14517,6815965,13330,0,100,N,N,N,CP_Units,TT_FinMile,DT_FixedDUR2,RV_OK,TK_Complete,EM02ASY272,02A P&IDs & Line List Issue - IFC,,,,0,0,0,0,0,0,0,0,,2006-08-28 00:00,2006-08-28 00:00,2007-07-09 08:00,2007-07-09 08:00,,2007-01-27 00:00,2007-01-27 00:00,,,2006-09-04 17:00,2006-09-04 17:00,,,,,PT_Normal,,,,,Glx/iQ1+RPK/I6z9FTBA2A,IBYM7BoxpkycnLz05hH62R,,,N,0,0,,,2007-02-01 02:41,2007-02-04 01:05,hbe4678,hbe4678,,,0
1118,12457299,14517,6815965,13330,0,100,N,N,N,CP_Units,TT_FinMile,DT_FixedDUR2,RV_OK,TK_Complete,EM02BSY272,02B P&IDs & Line List Issue - IFC,,,,0,0,0,0,0,0,0,0,,2006-05-18 00:00,2006-05-18 00:00,2008-02-02 08:01,2008-02-02 08:01,,2007-01-27 00:00,2007-01-27 00:00,,,2006-05-26 17:00,2006-05-26 17:00,,,,,PT_Normal,,,,,OExEMkfxTpW9WaqTQqV3AQ,CdBoWY+AXU+8MV5Do1iDwx,,,N,0,0,,,2007-02-01 02:41,2007-02-04 01:05,hbe4678,hbe4678,,,0
1119,12457300,14517,6815965,13330,0,100,N,N,N,CP_Units,TT_FinMile,DT_FixedDUR2,RV_OK,TK_Complete,EM02CSY272,02C P&IDs & Line List Issue - IFC,,,,0,0,0,0,0,0,0,0,,2006-11-13 00:00,2006-11-13 00:00,2008-02-15 17:00,2008-02-15 17:00,,2007-01-27 00:00,2007-01-27 00:00,,,2007-01-12 17:00,2007-01-12 17:00,,,,,PT_Normal,,,,,1B0RqcvpRaqIyx7FnuoK0Q,uvZV8Hm0rUagil/oo+ujpR,,,N,0,0,,,2007-02-01 02:41,2007-02-04 01:05,hbe4678,hbe4678,,,0
1120,12457301,14517,6815965,13330,0,100,N,N,N,CP_Units,TT_FinMile,DT_FixedDUR2,RV_OK,TK_Complete,EM02DSY272,02D P&IDs & Line List Issue - IFC,,,,0,0,0,0,0,0,0,0,,2006-08-21 00:00,2006-08-21 00:00,2007-11-13 08:01,2007-11-13 08:01,,2007-01-27 00:00,2007-01-27 00:00,,,2006-08-18 17:00,2006-08-18 17:00,,,,,PT_Normal,,,,,L6BYxxPcTze1mhppIqnNOg,Unzlw1OHf0yIBPyn04xkph,,,N,0,0,,,2007-02-01 02:41,2007-02-04 01:05,hbe4678,hbe4678,,,0
1121,12457302,14517,6815965,13330,0,100,N,N,N,CP_Units,TT_FinMile,DT_FixedDUR2,RV_OK,TK_Complete,EM02ESY272,02E P&IDs & Line List Issue - IFC,,,,0,0,0,0,0,0,0,0,,2006-09-29 17:00,2006-09-29 17:00,2007-09-17 08:01,2007-09-17 08:01,,2007-01-27 00:00,2007-01-27 00:00,,,2006-10-20 17:00,2006-10-20 17:00,,,,,PT_Normal,,,,,mKbtdN4/RwWSx3y+P0C6UQ,fHmJwjkXwkmH678mLGYMRR,,,N,0,0,,,2007-02-01 02:41,2007-02-04 01:05,hbe4678,hbe4678,,,0
1122,12457303,14517,6815965,13330,0,100,N,N,N,CP_Units,TT_FinMile,DT_FixedDUR2,RV_OK,TK_Complete,EM02FSY272,02F P&IDs & Line List Issue - IFC,,,,0,0,0,0,0,0,0,0,,2006-11-06 17:00,2006-11-06 17:00,2007-12-29 08:01,2007-12-29 08:01,,2007-01-27 00:00,2007-01-27 00:00,,,2006-11-06 17:00,2006-11-06 17:00,,,,,PT_Normal,,,,,XsYgBF2lTZWMdOfm5QjGjQ,hUu7SCrVF0ObdkxigRGSPR,,,N,0,0,,,2007-02-01 02:41,2007-02-04 01:05,hbe4678,hbe4678,,,0
1123,12457304,14517,6815965,13330,0,100,N,N,N,CP_Units,TT_FinMile,DT_FixedDUR2,RV_OK,TK_Complete,EM02GSY272,02G P&IDs & Line List Issue - IFC,,,,0,0,0,0,0,0,0,0,,2006-12-06 00:00,2006-12-06 00:00,2007-10-25 08:01,2007-10-25 08:01,,2007-02-02 17:00,2007-02-02 17:00,,,2006-12-22 17:00,2006-12-22 17:00,,,,,PT_Normal,,,,,gx2K/76cRiKgm2D9L1e/pw,2EOQIs+RWk2ZF+vhF1OKjR,,,N,0,0,,,2007-02-01 02:41,2007-02-04 01:05,hbe4678,hbe4678,,,0
1124,12457305,14517,6815965,13330,0,100,N,N,N,CP_Units,TT_FinMile,DT_FixedDUR2,RV_OK,TK_Complete,EM02HSY272,02H P&IDs & Line List Issue - IFC,,,,0,0,0,0,0,0,0,0,,2006-11-14 00:00,2006-11-14 00:00,2007-09-06 08:01,2007-09-06 08:01,,2007-01-27 00:00,2007-01-27 00:00,,,2006-12-22 17:00,2006-12-22 17:00,,,,,PT_Normal,,,,,gnW6MVtBS6mHbzbLm/ERGg,ttZowtVejk6QlthSW2/93R,,,N,0,0,,,2007-02-01 02:41,2007-02-04 01:05,hbe4678,hbe4678,,,0
1125,12457306,14517,6815965,13330,0,100,N,N,N,CP_Units,TT_FinMile,DT_FixedDUR2,RV_OK,TK_Complete,EM02JSY272,02J P&IDs & Line List Issue - IFC,,,,0,0,0,0,0,0,0,0,,2006-10-18 00:00,2006-10-18 00:00,2007-11-26 08:01,2007-11-26 08:01,,2007-01-27 00:00,2007-01-27 00:00,,,2006-10-27 17:00,2006-10-27 17:00,,,,,PT_Normal,,,,,MiLC69RvQPCieqbmzvjCAw,pK9jZGT5nU6oRoLrWL4yDB,,,N,0,0,,,2007-02-01 02:41,2007-02-04 01:05,hbe4678,hbe4678,,,0
1126,12457307,14517,6815965,13330,0,100,N,N,N,CP_Units,TT_FinMile,DT_FixedDUR2,RV_OK,TK_Complete,EM02KSY272,02K P&IDs & Line List Issue - IFC,,,,0,0,0,0,0,0,0,0,,2006-10-18 00:00,2006-10-18 00:00,2007-12-01 08:01,2007-12-01 08:01,,2007-01-27 00:00,2007-01-27 00:00,,,2006-10-27 17:00,2006-10-27 17:00,,,,,PT_Normal,,,,,OnjEZKZOSZWtI4WxsbxdiA,9bncKktNxUyW4yCZmHBkRB,,,N,0,0,,,2007-02-01 02:41,2007-02-04 01:05,hbe4678,hbe4678,,,0
1127,12457308,14517,6815965,13330,0,100,N,N,N,CP_Units,TT_FinMile,DT_FixedDUR2,RV_OK,TK_Complete,EM02LSY272,02L P&IDs & Line List Issue - IFC,,,,0,0,0,0,0,0,0,0,,2006-10-31 17:00,2006-10-31 17:00,2007-07-30 08:01,2007-07-30 08:01,,2007-01-27 00:00,2007-01-27 00:00,,,2006-11-17 17:00,2006-11-17 17:00,,,,,PT_Normal,,,,,yLzVxzEwRGuJDwwsdktGMQ,7sLGL6oU1k+T73QI7OmqqR,,,N,0,0,,,2007-02-01 02:41,2007-02-04 01:05,hbe4678,hbe4678,,,0
1128,12457309,14517,6815965,13330,0,100,N,N,N,CP_Units,TT_FinMile,DT_FixedDUR2,RV_OK,TK_Complete,EM02MSY272,02M P&IDs & Line List Issue - IFC,,,,0,0,0,0,0,0,0,0,,2006-09-21 17:00,2006-09-21 17:00,2007-12-04 08:01,2007-12-04 08:01,,2007-01-27 00:00,2007-01-27 00:00,,,2006-10-13 17:00,2006-10-13 17:00,,,,,PT_Normal,,,,,o7BMByJbSAWeJqmpe40mBA,prGIW0B3GUehe644ubpyoh,,,N,0,0,,,2007-02-01 02:41,2007-02-04 01:05,hbe4678,hbe4678,,,0
1129,12457310,14517,6815965,13330,0,100,N,N,N,CP_Units,TT_FinMile,DT_FixedDUR2,RV_OK,TK_Complete,EM02LSY172,02L P&IDs & Line List Issue - IFD,,,,0,0,0,0,0,0,0,0,,2006-06-19 08:01,2006-06-19 08:01,2007-07-30 08:01,2007-07-30 08:01,,2007-01-27 00:00,2007-01-27 00:00,,,2006-06-19 08:01,2006-06-19 08:01,,,,,PT_Normal,,,,,msUtU9+ERY6R4f/Vq7vtoA,,,,N,0,0,,,2007-02-01 02:41,2007-02-04 01:05,hbe4678,hbe4678,,,0
1130,12457311,14517,6815965,13330,0,100,N,N,N,CP_Units,TT_FinMile,DT_FixedDUR2,RV_OK,TK_Complete,EM02ASY172,02A P&IDs & Line List Issue - IFD,,,,0,0,0,0,0,0,0,0,,2006-06-19 17:00,2006-06-19 17:00,2007-04-16 08:00,2007-04-16 08:00,,2007-01-27 00:00,2007-01-27 00:00,,,2006-06-19 17:00,2006-06-19 17:00,,,,,PT_Normal,,,,,eT+g/Sg7R/afFgtiiqBJqA,8MFTpMHVfEmc5bfuuIRLnh,,,N,0,0,,,2007-02-01 02:41,2007-02-04 01:05,hbe4678,hbe4678,,,0
1131,12457312,14517,6815965,13330,0,100,N,N,N,CP_Units,TT_FinMile,DT_FixedDUR2,RV_OK,TK_Complete,EM02BSY172,02B P&IDs & Line List Issue - IFD,,,,0,0,0,0,0,0,0,0,,2006-04-18 00:00,2006-04-18 00:00,2008-02-02 08:01,2008-02-02 08:01,,2007-01-27 00:00,2007-01-27 00:00,,,2006-04-17 17:00,2006-04-17 17:00,,,,,PT_Normal,,,,,Nc/e61u8RvyoSPcZ5d9ueA,IBYM7BoxpkycnLz05hH62R,,,N,0,0,,,2007-02-01 02:41,2007-02-04 01:05,hbe4678,hbe4678,,,0
1132,12457313,14517,6815965,13330,0,100,N,N,N,CP_Units,TT_FinMile,DT_FixedDUR2,RV_OK,TK_Complete,EM02DSY172,02D P&IDs & Line List Issue - IFD,,,,0,0,0,0,0,0,0,0,,2006-05-23 00:00,2006-05-23 00:00,2007-04-24 08:01,2007-04-24 08:01,,2007-01-27 00:00,2007-01-27 00:00,,,2006-05-24 17:00,2006-05-24 17:00,,,,,PT_Normal,,,,,57R11xtZSx2h7llj3R654A,CdBoWY+AXU+8MV5Do1iDwx,,,N,0,0,,,2007-02-01 02:41,2007-02-04 01:05,hbe4678,hbe4678,,,0
1133,12457314,14517,6815965,13330,0,100,N,N,N,CP_Units,TT_FinMile,DT_FixedDUR2,RV_OK,TK_Complete,EM02ESY172,02E P&IDs & Line List Issue - IFD,,,,0,0,0,0,0,0,0,0,,2006-06-07 00:00,2006-06-07 00:00,2007-09-17 08:01,2007-09-17 08:01,,2007-01-27 00:00,2007-01-27 00:00,,,2006-06-12 17:00,2006-06-12 17:00,,,,,PT_Normal,,,,,9t8cInT/T6CG4DBOvLQL+Q,Unzlw1OHf0yIBPyn04xkph,,,N,0,0,,,2007-02-01 02:41,2007-02-04 01:05,hbe4678,hbe4678,,,0
1134,12457315,14517,6815965,13330,0,100,N,N,N,CP_Units,TT_FinMile,DT_FixedDUR2,RV_OK,TK_Complete,EM02FSY172,02F P&IDs & Line List Issue - IFD,,,,0,0,0,0,0,0,0,0,,2006-06-15 00:00,2006-06-15 00:00,2007-12-29 08:01,2007-12-29 08:01,,2007-01-27 00:00,2007-01-27 00:00,,,2006-06-13 17:00,2006-06-13 17:00,,,,,PT_Normal,,,,,b3nXjTazQpepkBD3m0HoHA,fHmJwjkXwkmH678mLGYMRR,,,N,0,0,,,2007-02-01 02:41,2007-02-04 01:05,hbe4678,hbe4678,,,0
1135,12457316,14517,6815971,13330,1,100,N,N,N,CP_Units,TT_Task,DT_FixedDUR2,RV_OK,TK_Complete,EM02CCV125,02C Design & Model Structural Fdns,,,,0,0,0,0,368,0,0,0,,2005-09-12 00:00,2005-11-28 00:00,2007-08-07 08:01,2007-08-07 08:01,,2007-01-27 00:00,2007-01-27 00:00,,,2005-09-27 08:00,2005-11-29 17:00,,,,,PT_Normal,,,,,q8rMREqjRw6tUz5PKAul8g,Ui3h05h0YU2OwsNmAFgLqR,,,N,0,0,,,2007-02-01 02:41,2007-02-04 01:05,hbe4678,hbe4678,,,0
1136,12457317,14517,6815971,13330,1,100,N,N,N,CP_Units,TT_Task,DT_FixedDUR2,RV_OK,TK_Complete,EM02CCV128,02C Update Model Structural Fdns & Issue Dwgs - IFC,,,,0,0,0,0,160,0,0,0,,2006-05-12 00:00,2006-09-15 17:00,2007-08-07 08:01,2007-08-07 08:01,,2007-01-27 00:00,2007-01-27 00:00,,,2006-06-26 08:00,2006-07-21 17:00,,,,,PT_Normal,,,,,jYOlY5xhQQOT3GNt2ShnnQ,RFrzyxrpFUya3gilT7UOax,,,N,0,0,,,2007-02-01 02:41,2007-02-04 01:05,hbe4678,hbe4678,,,0
1137,12457318,14517,6815971,13330,1,100,N,N,N,CP_Units,TT_Task,DT_FixedDUR2,RV_OK,TK_Complete,EM02CCV120,02C Design & Model Major Structural Steel,,,,0,0,0,0,400,0,0,0,,2005-09-19 00:00,2005-11-28 00:00,2007-09-05 08:01,2007-09-05 08:01,,2007-01-27 00:00,2007-01-27 00:00,,,2005-10-04 08:00,2005-12-12 17:00,,,,,PT_Normal,,,,,6YQASe+TTIutXQnLbDGWpQ,MlkvX6HHk0iH+o+6HuHQyh,,,N,0,0,,,2007-02-01 02:41,2007-02-04 01:05,hbe4678,hbe4678,,,0
1138,12457319,14517,6815971,13330,1,100,N,N,N,CP_Units,TT_Task,DT_FixedDUR2,RV_OK,TK_Complete,EM02CCV122,02C Update Model Struct Steel & Issue Dwgs - IFC,,,,0,0,0,0,216,0,0,0,,2006-07-03 00:00,2006-09-15 00:00,2007-09-05 08:01,2007-09-05 08:01,,2007-01-27 00:00,2007-01-27 00:00,,,2006-07-10 08:00,2006-08-15 17:00,,,,,PT_Normal,,,,,uNUtlNPySUeMqrpAo0cL1w,esiO73JlwUaNYSJkSh2fvx,,,N,0,0,,,2007-02-01 02:41,2007-02-04 01:05,hbe4678,hbe4678,,,0
1139,12457320,14517,6815971,13330,1,100,N,N,N,CP_Units,TT_Task,DT_FixedDUR2,RV_OK,TK_Complete,EM02GCV120,02G Design & Model Major Structural Steel,,,,0,0,0,0,320,0,0,0,,2005-09-05 00:00,2006-03-15 17:00,2007-08-08 08:01,2007-08-08 08:01,,2007-01-27 00:00,2007-01-27 00:00,,,2005-09-20 08:00,2005-11-14 17:00,,,,,PT_Normal,,,,,OR3j6TM/SjuRVcpaq0rjKg,MlkvX6HHk0iH+o+6HuHQyh,,,N,0,0,,,2007-02-01 02:41,2007-02-04 01:05,hbe4678,hbe4678,,,0
1140,12457321,14517,6815971,13330,1,100,N,N,N,CP_Units,TT_Task,DT_FixedDUR2,RV_OK,TK_Complete,EM02GCV122,02G Update Model Struct Steel & Issue Dwgs - IFC,,,,0,0,0,0,279.983333,0,0,0,,2006-09-25 08:00,2007-01-26 17:00,2007-08-08 08:01,2007-08-08 08:01,,2007-02-02 17:00,2007-02-02 17:00,,,2006-09-25 08:00,2006-11-10 16:59,,,,,PT_Normal,,,,,vQcxkNaCSJ2TX19uhvBO3w,esiO73JlwUaNYSJkSh2fvx,,,N,0,0,,,2007-02-01 02:41,2007-02-04 01:05,hbe4678,hbe4678,,,0
1141,12457322,14517,6815971,13330,1,100,N,N,N,CP_Units,TT_Task,DT_FixedDUR2,RV_OK,TK_Complete,EM02GCV125,02G Design & Model Structural Fdns,,,,0,0,0,0,328,0,0,0,,2005-09-16 00:00,2006-03-15 17:00,2007-08-08 08:01,2007-08-08 08:01,,2007-01-27 00:00,2007-01-27 00:00,,,2005-09-30 08:00,2005-11-25 17:00,,,,,PT_Normal,,,,,UGcbvFTWQzqPFG/y0OLuLA,4kyIuY+gAEStrlF8gj1Knx,,,N,0,0,,,2007-02-01 02:41,2007-02-04 01:05,hbe4678,hbe4678,,,0
1142,12457323,14517,6815971,13330,1,100,N,N,N,CP_Units,TT_Task,DT_FixedDUR2,RV_OK,TK_Complete,EM02GCV128,02G Update Model Structural Fdns & Issue Dwgs - IFC,,,,0,0,0,0,239.983333,0,0,0,,2006-11-13 08:00,2007-01-04 00:00,2007-08-08 08:01,2007-08-08 08:01,,2007-02-02 17:00,2007-02-02 17:00,,,2006-11-13 08:00,2006-12-22 16:59,,,,,PT_Normal,,,,,3JN0XFvITsm7uxfJUvDUvA,aH+R8plp/kyl+gxZldyfyB,,,N,0,0,,,2007-02-01 02:41,2007-02-04 01:05,hbe4678,hbe4678,,,0
1143,12457324,14517,6815971,13330,1,100,N,N,N,CP_Units,TT_Task,DT_FixedDUR2,RV_OK,TK_Complete,EK02KCV000,02K  114-F Benfield Solution Storage Tank - Fdn. Dwgs-IFC,,,,0,0,0,0,240,0,0,0,,2006-03-20 00:00,2006-04-21 17:00,2007-05-20 08:01,2007-05-20 08:01,,2007-01-27 00:00,2007-01-27 00:00,,,2006-04-14 08:01,2006-05-26 08:01,,,,,PT_Normal,,,,,kQskn9I7Q3urQPE/nDdsaA,hKeuoXKS3UqgDVRVUJ/6qh,,,N,0,0,,,2007-02-01 02:41,2007-02-04 01:05,hbe4678,hbe4678,,,0
1144,12457325,14517,6815971,13330,1,100,N,N,N,CP_Units,TT_Task,DT_FixedDUR2,RV_OK,TK_Complete,EM02YCV123,02Y Struct Steel Issue Dwgs - IFC Silencer Area,,,,0,0,0,0,368,0,0,0,,2006-07-27 00:00,2006-08-30 00:00,2006-12-25 08:00,2006-12-25 08:00,,2007-01-27 00:00,2007-01-27 00:00,,,2006-08-14 08:00,2006-10-16 17:00,,,,,PT_Normal,,,,,BsaqidwkQC+VuDTgaXYYyQ,5R0kTc1hRkSga1Yn1zUikx,,,N,0,0,,,2007-02-01 02:41,2007-02-04 01:05,hbe4678,hbe4678,,,0
1145,12457326,14517,6815971,13330,1,100,N,N,N,CP_Units,TT_Task,DT_FixedDUR2,RV_OK,TK_Complete,EMO2YCV124,02Y Structl Fdns Issue Dwgs - IFC Silencer Area,,,,0,0,0,0,296,0,0,0,,2006-07-24 00:00,2006-09-05 00:00,2006-12-25 08:00,2006-12-25 08:00,,2007-01-27 00:00,2007-01-27 00:00,,,2006-08-14 08:00,2006-10-03 17:00,,,,,PT_Normal,,,,,Qdmf0CTHSLmmT4CXWP6wDw,KU7JnN7fk0ScTrQ/6lynLx,,,N,0,0,,,2007-02-01 02:41,2007-02-04 01:05,hbe4678,hbe4678,,,0
1146,12457327,14517,6815971,13330,1,100,N,N,N,CP_Units,TT_Task,DT_FixedDUR2,RV_OK,TK_Complete,EM02NCV164,02N Update Model Major Eq. Fdns & Issue Dwgs-IFC,,,,0,0,0,0,80,0,0,0,,2006-01-31 08:00,2006-07-24 08:01,2007-09-19 08:01,2007-09-19 08:01,,2007-01-27 00:00,2007-01-27 00:00,,,2006-01-31 08:00,2006-02-13 17:00,,,,,PT_Normal,,,,,jpFtbfj0R4OVqaWa7iunew,3eb0umbp7k60UnzrxhP0Ph,,,N,0,0,,,2007-02-01 02:41,2007-02-04 01:05,hbe4678,hbe4678,,,0
1147,12457328,14517,6815971,13330,1,100,N,N,N,CP_Units,TT_Task,DT_FixedDUR2,RV_OK,TK_Complete,EM02YCV120,02Y Design & Model Major Structural Steel,,,,0,0,0,0,464,0,0,0,,2005-08-29 08:00,2005-12-14 00:00,2006-12-25 08:00,2006-12-25 08:00,,2007-01-27 00:00,2007-01-27 00:00,,,2005-08-29 08:00,2005-11-16 17:00,,,,,PT_Normal,,,,,vJ4FtdZUTy29culZ2iaHEA,UiDzNZu+40KJ1RChO6ZGgR,,,N,0,0,,,2007-02-01 02:41,2007-02-04 01:05,hbe4678,hbe4678,,,0
1148,12457329,14517,6815971,13330,1,100,N,N,N,CP_Units,TT_Task,DT_FixedDUR2,RV_OK,TK_Complete,EM02YCV122,02Y Update Model Struct Steel & Issue Dwgs - IFC,,,,0,0,0,0,368,0,0,0,,2006-04-10 08:00,2006-07-27 00:00,2006-12-25 08:00,2006-12-25 08:00,,2007-01-27 00:00,2007-01-27 00:00,,,2006-04-10 08:00,2006-06-12 17:00,,,,,PT_Normal,,,,,DbwDK2IvTeuyCmBoN+Dt1Q,cmen7blDiEC+MmIltxThqB,,,N,0,0,,,2007-02-01 02:41,2007-02-04 01:05,hbe4678,hbe4678,,,0
1149,12457330,14517,6815971,13330,1,100,N,N,N,CP_Units,TT_Task,DT_FixedDUR2,RV_OK,TK_Complete,EM02YCV130,02Y Design & Model Structural Fdns,,,,0,0,0,0,240,0,0,0,,2005-06-27 08:00,2005-10-17 17:00,2006-12-25 08:00,2006-12-25 08:00,,2007-01-27 00:00,2007-01-27 00:00,,,2005-06-27 08:00,2005-08-09 17:00,,,,,PT_Normal,,,,,9OnG65RaRlW2A/z2peF/kw,NIi/1gG72kOaO+yBz6Caih,,,N,0,0,,,2007-02-01 02:41,2007-02-04 01:05,hbe4678,hbe4678,,,0
1150,12457331,14517,6815971,13330,1,100,N,N,N,CP_Units,TT_Task,DT_FixedDUR2,RV_OK,TK_Complete,EM02YCV133,02Y Update Model Structural Fdns & Issue Dwgs - IFC,,,,0,0,0,0,296,0,0,0,,2006-04-24 08:00,2006-07-21 00:00,2006-12-25 08:00,2006-12-25 08:00,,2007-01-27 00:00,2007-01-27 00:00,,,2006-04-24 08:00,2006-06-13 17:00,,,,,PT_Normal,,,,,gkJ6SMRFSKaH9ixcIe+9Xg,msexczIe+Ua485jXgsOC+h,,,N,0,0,,,2007-02-01 02:41,2007-02-04 01:05,hbe4678,hbe4678,,,0
1151,12457332,14517,6815971,13330,1,100,N,N,N,CP_Units,TT_Task,DT_FixedDUR2,RV_OK,TK_Complete,EM02CCV126,02C Conceptual Misc. Steel Design/ Model,,,,0,0,0,0,160,0,0,0,,2006-06-28 08:00,2006-08-10 00:00,2007-05-03 08:01,2007-05-03 08:01,,2007-01-27 00:00,2007-01-27 00:00,,,2006-06-28 08:00,2006-07-25 17:00,,,,,PT_Normal,,,,,Sb7pt+YPSNGJn6BTWTnqhg,++lskqHZfEOG5w+5+xHsDB,,,N,0,0,,,2007-02-01 02:41,2007-02-04 01:05,hbe4678,hbe4678,,,0
1152,12457333,14517,6815971,13330,1,100,N,N,N,CP_Units,TT_Task,DT_FixedDUR2,RV_OK,TK_Complete,EM02CCV127,02C Model Misc. Steel & Issue Dwgs - IFC,,,,0,0,0,0,40,0,0,0,2006-11-27 00:00,2006-12-04 08:00,2006-12-08 17:00,2007-05-03 08:01,2007-05-03 08:01,,2007-01-27 00:00,2007-01-27 00:00,,,2006-12-04 08:00,2006-12-08 17:00,,,,CS_MSOA,PT_Normal,,,,,cscF1leDQ/So0gpmpmhe7g,hcf3bW7q0EqMS4J3j9wCWR,,,N,0,0,,,2007-02-01 02:41,2007-02-04 01:05,hbe4678,hbe4678,,,0
1153,12457334,14517,6815971,13330,1,100,N,N,N,CP_Units,TT_Task,DT_FixedDUR2,RV_OK,TK_Complete,EM02CCV160,02C Design & Model Major Eq. Fdns,,,,0,0,0,0,320,0,0,0,,2005-09-06 00:00,2005-10-31 17:00,2007-05-23 08:00,2007-05-23 08:00,,2007-01-27 00:00,2007-01-27 00:00,,,2005-09-13 08:00,2005-11-07 17:00,,,,,PT_Normal,,,,,zfj2VttbRMC0E1umngMeUg,9t5uNXwiF0GcPTw4/9rLrB,,,N,0,0,,,2007-02-01 02:41,2007-02-04 01:05,hbe4678,hbe4678,,,0
1154,12457335,14517,6815971,13330,1,100,N,N,N,CP_Units,TT_Task,DT_FixedDUR2,RV_OK,TK_Complete,EM02CCV164,02C Update Model Major Eq. Fdns & Issue Dwgs-IFC,,,,0,0,0,0,120,0,0,0,,2006-06-05 08:00,2006-07-28 00:00,2007-08-07 08:01,2007-08-07 08:01,,2007-01-27 00:00,2007-01-27 00:00,,,2006-06-05 08:00,2006-06-23 17:00,,,,,PT_Normal,,,,,RcQHgMWCRluH9JyD0Rn0AA,SXFEtS00QE2l3J4WfnTKOB,,,N,0,0,,,2007-02-01 02:41,2007-02-04 01:05,hbe4678,hbe4678,,,0
1155,12457336,14517,6815971,13330,1,100,N,N,N,CP_Units,TT_Task,DT_FixedDUR2,RV_OK,TK_Complete,EM02CCV166,02C Conceptual Misc. Foundation Design/ Model,,,,0,0,0,0,120,0,0,0,,2006-07-05 00:00,2006-09-21 17:00,2007-09-06 08:01,2007-09-06 08:01,,2007-01-27 00:00,2007-01-27 00:00,,,2006-07-12 08:00,2006-08-01 17:00,,,,,PT_Normal,,,,,61AykpISS4KqRteSc0/jbg,Rhg2qFGZcESoX7YkE0EpoB,,,N,0,0,,,2007-02-01 02:42,2007-02-04 01:05,hbe4678,hbe4678,,,0
1156,12457337,14517,6815971,13330,1,100,N,N,N,CP_Units,TT_Task,DT_FixedDUR2,RV_OK,TK_Complete,EM02CCV167,02C Update Model Misc Fdns & Issue Dwgs - IFC,,,,0,0,0,0,40,0,0,0,,2006-12-04 08:00,2006-12-08 17:00,2007-09-06 08:01,2007-09-06 08:01,,2007-01-27 00:00,2007-01-27 00:00,,,2006-12-04 08:00,2006-12-08 17:00,,,,,PT_Normal,,,,,q+XGcz5ZRGOybfHVguVs8w,mlb0oM4/F0upZziAZ9fYOR,,,N,0,0,,,2007-02-01 02:42,2007-02-04 01:05,hbe4678,hbe4678,,,0
1157,12457338,14517,6815971,13330,1,100,N,N,N,CP_Units,TT_Task,DT_FixedDUR2,RV_OK,TK_Complete,EM02HCV120,02H Design & Model Major Structural Steel,,,,0,0,0,0,240,0,0,0,,2005-07-22 08:00,2005-11-11 17:00,2007-04-28 08:01,2007-04-28 08:01,,2007-01-27 00:00,2007-01-27 00:00,,,2005-07-22 08:00,2005-09-01 17:00,,,,,PT_Normal,,,,,QmvSEcUbRAuDTGxtbjGMxw,LuxN8VI88kWDdmKJnhZSAh,,,N,0,0,,,2007-02-01 02:42,2007-02-04 01:05,hbe4678,hbe4678,,,0
1158,12457339,14517,6815971,13330,1,100,N,N,N,CP_Units,TT_Task,DT_FixedDUR2,RV_OK,TK_Complete,EM02HCV122,02H Update Model Struct Steel & Issue Dwgs - IFC,,,,0,0,0,0,120,0,0,0,,2006-06-19 00:00,2006-08-08 00:00,2007-05-14 08:01,2007-05-14 08:01,,2007-01-27 00:00,2007-01-27 00:00,,,2006-08-29 08:00,2006-09-18 17:00,,,,,PT_Normal,,,,,FGSmxMqZQkSlQlMmB8LntQ,Fw2Ap7qC/E6MJqAK2WbU8B,,,N,0,0,,,2007-02-01 02:42,2007-02-04 01:05,hbe4678,hbe4678,,,0
1159,12457340,14517,6815971,13330,1,100,N,N,N,CP_Units,TT_Task,DT_FixedDUR2,RV_OK,TK_Complete,EM02HCV125,02H Design & Model Structural Fdns,,,,0,0,0,0,240,0,0,0,,2005-07-22 08:00,2005-12-14 00:00,2007-04-28 08:01,2007-04-28 08:01,,2007-01-27 00:00,2007-01-27 00:00,,,2005-07-22 08:00,2005-09-01 17:00,,,,,PT_Normal,,,,,aj2KrTfiQ1ygWZ9m+mW1ZA,GXFKbM+JUUyF/XoEuGjYfR,,,N,0,0,,,2007-02-01 02:42,2007-02-04 01:05,hbe4678,hbe4678,,,0
1160,12457341,14517,6815971,13330,1,100,N,N,N,CP_Units,TT_Task,DT_FixedDUR2,RV_OK,TK_Complete,EM02HCV126,02H Conceptual Misc. Steel Design/ Model,,,,0,0,0,0,160,0,0,0,,2006-07-27 00:00,2006-09-19 17:00,2007-04-28 08:01,2007-04-28 08:01,,2007-01-27 00:00,2007-01-27 00:00,,,2006-08-04 08:00,2006-08-31 17:00,,,,,PT_Normal,,,,,VPLP1eaLSC6VQLbVpMj4Tg,C/dhnrxfJEm4s52zul6FIR,,,N,0,0,,,2007-02-01 02:42,2007-02-04 01:05,hbe4678,hbe4678,,,0
1161,12457342,14517,6815971,13330,1,100,N,N,N,CP_Units,TT_Task,DT_FixedDUR2,RV_OK,TK_Complete,EM02HCV127,02H Model Misc. Steel & Issue Dwgs - IFC,,,,0,0,0,0,40,0,0,0,,2006-12-11 08:00,2006-12-15 00:00,2007-04-28 08:01,2007-04-28 08:01,,2007-01-27 00:00,2007-01-27 00:00,,,2006-12-11 08:00,2006-12-15 17:00,,,,,PT_Normal,,,,,ySKg7ST4Rde5vqo17M1/1w,ns50ESb6l0aqghyLWrZURh,,,N,0,0,,,2007-02-01 02:42,2007-02-04 01:05,hbe4678,hbe4678,,,0
1162,12457343,14517,6815971,13330,1,100,N,N,N,CP_Units,TT_Task,DT_FixedDUR2,RV_OK,TK_Complete,EM02HCV128,02H Update Model Structural Fdns & Issue Dwgs - IFC,,,,0,0,0,0,160,0,0,0,,2006-06-05 00:00,2006-06-30 00:00,2007-09-10 08:01,2007-09-10 08:01,,2007-01-27 00:00,2007-01-27 00:00,,,2006-09-04 08:00,2006-09-29 17:00,,,,,PT_Normal,,,,,nrbTWmgaTcOn/D60Vfq7ow,s2TL+UypSEyhCbsyi/kLmx,,,N,0,0,,,2007-02-01 02:42,2007-02-04 01:05,hbe4678,hbe4678,,,0
1163,12457344,14517,6815971,13330,1,100,N,N,N,CP_Units,TT_Task,DT_FixedDUR2,RV_OK,TK_Complete,EM02HCV160,02H Design & Model Major Eq. Fdns (Excludes fan fdns.),,,,0,0,0,0,360,0,0,0,,2005-08-01 08:00,2006-03-31 17:00,2007-05-23 08:00,2007-05-23 08:00,,2007-01-27 00:00,2007-01-27 00:00,,,2005-08-01 08:00,2005-09-30 17:00,,,,,PT_Normal,,,,,S8Cumj/3R6aCQYaILuwOgA,g2/5KJu88UuHjxKT8Y3SGh,,,N,0,0,,,2007-02-01 02:42,2007-02-04 01:05,hbe4678,hbe4678,,,0
1164,12457345,14517,6815971,13330,1,100,N,N,N,CP_Units,TT_Task,DT_FixedDUR2,RV_OK,TK_Complete,EM02HCV164,02H Update Model Major Eq. Fdns & Issue Dwgs-IFC,,,,0,0,0,0,160,0,0,0,,2006-05-01 00:00,2006-11-23 00:00,2007-06-07 08:01,2007-06-07 08:01,,2007-01-27 00:00,2007-01-27 00:00,,,2006-06-22 08:00,2006-07-19 17:00,,,,,PT_Normal,,,,,NAItPLVORkWZf2CeWBDDBw,d9t/tA8ItECnGxvS9VGzMh,,,N,0,0,,,2007-02-01 02:42,2007-02-04 01:05,hbe4678,hbe4678,,,0
1165,12457346,14517,6815971,13330,1,100,N,N,N,CP_Units,TT_Task,DT_FixedDUR2,RV_OK,TK_Complete,EM02HCV166,02H Conceptual Misc. Foundation Design/ Model,,,,0,0,0,0,120,0,0,0,,2006-07-27 00:00,2006-08-16 00:00,2007-09-06 08:01,2007-09-06 08:01,,2007-01-27 00:00,2007-01-27 00:00,,,2006-08-04 08:00,2006-08-24 17:00,,,,,PT_Normal,,,,,g3xLoEE3TgOEWTp8DaLgbA,6Y/hCogSHEKOkcq36lUyPh,,,N,0,0,,,2007-02-01 02:42,2007-02-04 01:05,hbe4678,hbe4678,,,0
1166,12457347,14517,6815971,13330,1,100,N,N,N,CP_Units,TT_Task,DT_FixedDUR2,RV_OK,TK_Complete,EM02HCV167,02H Update Model Misc Fdns & Issue Dwgs - IFC,,,,0,0,0,0,40,0,0,0,2006-12-13 00:00,2006-12-11 08:00,2006-12-15 17:00,2007-09-06 08:01,2007-09-06 08:01,,2007-01-27 00:00,2007-01-27 00:00,,,2006-12-11 08:00,2006-12-15 17:00,,,,CS_MSOA,PT_Normal,,,,,P27A51YCTw+s2REyyM5mbw,9QEE34nwtEuVqG8gmKH4nB,,,N,0,0,,,2007-02-01 02:42,2007-02-04 01:05,hbe4678,hbe4678,,,0
1167,12457348,14517,6815971,13330,1,100,N,N,N,CP_Units,TT_Task,DT_FixedDUR2,RV_OK,TK_Complete,EM02JCV160,02J Design & Model Major Eq. Fdns,,,,0,0,0,0,240,0,0,0,,2005-09-23 00:00,2005-12-16 17:00,2007-05-07 08:00,2007-05-07 08:00,,2007-01-27 00:00,2007-01-27 00:00,,,2005-08-29 08:00,2005-10-07 17:00,,,,,PT_Normal,,,,,5I57i2v5SG6Pwq2lOtWm4w,TIdqItUX60+4nhbl4feLrx,,,N,0,0,,,2007-02-01 02:42,2007-02-04 01:05,hbe4678,hbe4678,,,0
1168,12457349,14517,6815971,13330,1,100,N,N,N,CP_Units,TT_Task,DT_FixedDUR2,RV_OK,TK_Complete,EM02JCV164,02J Update Model Major Eq. Fdns & Issue Dwgs-IFC,,,,0,0,0,0,120,0,0,0,,2006-04-06 00:00,2006-04-06 00:00,2007-08-12 08:01,2007-08-12 08:01,,2007-01-27 00:00,2007-01-27 00:00,,,2006-05-25 08:00,2006-06-14 17:00,,,,,PT_Normal,,,,,cgfoDfbbQgqWOxn0LN8m9g,XuZIaGa7NUOx7ST2EM22nB,,,N,0,0,,,2007-02-01 02:42,2007-02-04 01:05,hbe4678,hbe4678,,,0
1169,12457350,14517,6815971,13330,1,100,N,N,N,CP_Units,TT_Task,DT_FixedDUR2,RV_OK,TK_Complete,EM02JCV166,02J Conceptual Misc. Foundation Design/  Model,,,,0,0,0,0,120,0,0,0,,2006-06-13 00:00,2006-07-12 17:00,2007-11-25 08:01,2007-11-25 08:01,,2007-01-27 00:00,2007-01-27 00:00,,,2006-06-22 08:00,2006-07-12 17:00,,,,,PT_Normal,,,,,Ij6jyzy9RAqNnjNd7+IeJQ,wpYZ3+kmA0aWA/HmQuAUPx,,,N,0,0,,,2007-02-01 02:42,2007-02-04 01:05,hbe4678,hbe4678,,,0
1170,12457351,14517,6815971,13330,1,100,N,N,N,CP_Units,TT_Task,DT_FixedDUR2,RV_OK,TK_Complete,EM02JCV167,02J Update Model Misc Fdns & Issue Dwgs - IFC,,,,0,0,0,0,40,0,0,0,,2006-10-04 08:00,2006-10-27 00:00,2007-11-25 08:01,2007-11-25 08:01,,2007-01-27 00:00,2007-01-27 00:00,,,2006-10-04 08:00,2006-10-10 17:00,,,,,PT_Normal,,,,,tHnSIn+1QDi4XM96QTPbQw,CUfzZqo9tkKFkh0gxZf8Dx,,,N,0,0,,,2007-02-01 02:42,2007-02-04 01:05,hbe4678,hbe4678,,,0
1171,12457352,14517,6815971,13330,1,100,N,N,N,CP_Units,TT_Task,DT_FixedDUR2,RV_OK,TK_Complete,EM02KCV126,02K Conceptual Misc. Steel Design/ Model,,,,0,0,0,0,160,0,0,0,,2006-07-11 08:00,2006-08-30 00:00,2007-06-18 08:00,2007-06-18 08:00,,2007-01-27 00:00,2007-01-27 00:00,,,2006-07-11 08:00,2006-08-07 17:00,,,,,PT_Normal,,,,,NTchrQkCS0CHnFcB3oZ0YA,xfGR5qMS+UCIWf+/0A19QB,,,N,0,0,,,2007-02-01 02:42,2007-02-04 01:05,hbe4678,hbe4678,,,0
1172,12457353,14517,6815971,13330,1,100,N,N,N,CP_Units,TT_Task,DT_FixedDUR2,RV_OK,TK_Active,EM02KCV127,02K Model Misc. Steel & Issue Dwgs - IFC,,800,0,80,0,0,0,40,0,0,0,,2006-10-09 08:00,,2007-06-18 08:00,2007-06-29 17:00,,2007-01-29 08:00,2007-02-09 17:00,2007-01-29 08:00,2007-02-09 17:00,2006-10-09 08:00,2006-10-13 17:00,,2007-06-18 08:00,2007-06-29 17:00,,PT_Normal,,,,,oCNIbIfoTtKPBkSShAPnJw,XJjlikqXCkmoaVxEsp/Qxh,,,N,0,0,,,2007-02-01 02:42,2007-02-01 02:43,hbe4678,hbe4678,2007-01-29 08:00,2007-02-09 17:00,80
1173,12457354,14517,6815971,13330,1,100,N,N,N,CP_Units,TT_Task,DT_FixedDUR2,RV_OK,TK_Complete,EM02KCV160,02K Design & Model Major Eq. Fdns,,,,0,0,0,0,240,0,0,0,,2005-09-23 08:00,2005-12-21 00:00,2007-05-20 08:01,2007-05-20 08:01,,2007-01-27 00:00,2007-01-27 00:00,,,2005-09-23 08:00,2005-11-03 17:00,,,,,PT_Normal,,,,,qVtdcfa4SDKJvDkKVledOw,p/eaZ0tIwkqdhaYHz5f8+B,,,N,0,0,,,2007-02-01 02:42,2007-02-04 01:05,hbe4678,hbe4678,,,0
1174,12457355,14517,6815971,13330,1,100,N,N,N,CP_Units,TT_Task,DT_FixedDUR2,RV_OK,TK_Complete,EM02KCV164,02K Update Model Major Eq. Fdns & Issue Dwgs-IFC,,,,0,0,0,0,160,0,0,0,,2006-06-07 08:00,2006-07-17 00:00,2007-05-20 08:01,2007-05-20 08:01,,2007-01-27 00:00,2007-01-27 00:00,,,2006-06-07 08:00,2006-07-04 17:00,,,,,PT_Normal,,,,,xq8v55DIRyCypeW0A7LoIQ,M1ZGEOQbOEiqZ5rqggAg7B,,,N,0,0,,,2007-02-01 02:42,2007-02-04 01:05,hbe4678,hbe4678,,,0
1175,12457356,14517,6815971,13330,1,100,N,N,N,CP_Units,TT_Task,DT_FixedDUR2,RV_OK,TK_Complete,EM02KCV166,02K Conceptual Misc. Foundation Design/  Model,,,,0,0,0,0,120,0,0,0,,2006-08-10 00:00,2006-08-30 17:00,2007-11-14 08:01,2007-11-14 08:01,,2007-01-27 00:00,2007-01-27 00:00,,,2006-08-17 08:00,2006-09-06 17:00,,,,,PT_Normal,,,,,MtQjxd4tQ76htPsPg14wSA,4Be7V5zTfE6T2PUYpv2L1R,,,N,0,0,,,2007-02-01 02:42,2007-02-04 01:05,hbe4678,hbe4678,,,0
1176,12457357,14517,6815971,13330,1,100,N,N,N,CP_Units,TT_Task,DT_FixedDUR2,RV_OK,TK_Active,EM02KCV167,02K Update Model Misc Fdns & Issue Dwgs - IFC,,1656.01666666667,104,80,0,0,0,40,0,0,0,,2006-10-09 08:00,,2007-11-14 08:01,2007-11-28 08:01,,2007-01-29 08:00,2007-02-09 17:00,2007-01-29 08:00,2007-02-09 17:00,2006-10-09 08:00,2006-10-13 17:00,,2007-11-14 08:01,2007-11-28 08:01,,PT_Normal,,,,,LAv+TJfoQ8G6chDnSSVNHw,U+MJU0LpT0acKsD8JQ+QbR,,,N,0,0,,,2007-02-01 02:42,2007-02-04 01:00,hbe4678,hbe4678,2007-01-29 08:00,2007-02-09 17:00,80
1177,12457358,14517,6815971,13330,1,100,N,N,N,CP_Units,TT_Task,DT_FixedDUR2,RV_OK,TK_Complete,EM02MCV120,02M Design & Model Major Structural Steel,,,,0,0,0,0,272,0,0,0,,2005-10-04 08:00,2005-11-18 17:00,2007-05-07 08:00,2007-05-07 08:00,,2007-01-27 00:00,2007-01-27 00:00,,,2005-10-04 08:00,2005-11-18 17:00,,,,,PT_Normal,,,,,t5he9mRHT7mrf+ftBgDtZg,3tNLGgAr+0aUPcVbN+zxbx,,,N,0,0,,,2007-02-01 02:42,2007-02-04 01:05,hbe4678,hbe4678,,,0
1178,12457359,14517,6815971,13330,1,100,N,N,N,CP_Units,TT_Task,DT_FixedDUR2,RV_OK,TK_Complete,EM02MCV122,02M Update Model Struct Steel & Issue Dwgs - IFC,,,,0,0,0,0,200,0,0,0,,2006-06-19 00:00,2006-07-31 17:00,2007-06-19 08:01,2007-06-19 08:01,,2007-01-27 00:00,2007-01-27 00:00,,,2006-06-26 08:00,2006-07-28 17:00,,,,,PT_Normal,,,,,+sRejq9AR7yZAcN9BrViug,gcNkBTY+bky2hW3qz+783R,,,N,0,0,,,2007-02-01 02:42,2007-02-04 01:05,hbe4678,hbe4678,,,0
1179,12457360,14517,6815971,13330,1,100,N,N,N,CP_Units,TT_Task,DT_FixedDUR2,RV_OK,TK_Complete,EM02MCV125,02M Design & Model Structural Fdns,,,,0,0,0,0,248,0,0,0,,2005-10-06 00:00,2005-11-18 17:00,2007-05-07 08:00,2007-05-07 08:00,,2007-01-27 00:00,2007-01-27 00:00,,,2005-10-07 08:00,2005-11-18 17:00,,,,,PT_Normal,,,,,+9iudZ7CSYG/4Op9zCog/Q,h152b94Wn0+IxaQrvQ8LTh,,,N,0,0,,,2007-02-01 02:42,2007-02-04 01:05,hbe4678,hbe4678,,,0
1180,12457361,14517,6815971,13330,1,100,N,N,N,CP_Units,TT_Task,DT_FixedDUR2,RV_OK,TK_Complete,EM02MCV126,02M Conceptual Misc. Steel Design/ Model,,,,0,0,0,0,160,0,0,0,,2006-06-19 08:00,2006-07-14 00:00,2007-07-17 08:01,2007-07-17 08:01,,2007-01-27 00:00,2007-01-27 00:00,,,2006-06-19 08:00,2006-07-14 17:00,,,,,PT_Normal,,,,,vn8mFfckTwuZHuSlvx+3vg,5vq2fQbsA0+1WVBYu0QT5R,,,N,0,0,,,2007-02-01 02:42,2007-02-04 01:05,hbe4678,hbe4678,,,0
1181,12457362,14517,6815971,13330,1,100,N,N,N,CP_Units,TT_Task,DT_FixedDUR2,RV_OK,TK_Complete,EM02MCV127,02M Model Misc. Steel & Issue Dwgs - IFC,,,,0,0,0,0,40,0,0,0,,2006-07-20 00:00,2006-08-21 17:00,2007-07-17 08:01,2007-07-17 08:01,,2007-01-27 00:00,2007-01-27 00:00,,,2006-07-28 08:00,2006-08-03 17:00,,,,,PT_Normal,,,,,WXIfMQ0sSl+PKMmsYCvDYw,onMEtOwtdE2ipiJDH0tXyx,,,N,0,0,,,2007-02-01 02:42,2007-02-04 01:05,hbe4678,hbe4678,,,0
1182,12457363,14517,6815971,13330,1,100,N,N,N,CP_Units,TT_Task,DT_FixedDUR2,RV_OK,TK_Complete,EM02MCV128,02M Update Model Structural Fdns & Issue Dwgs - IFC,,,,0,0,0,0,160,0,0,0,,2006-07-10 08:00,2006-08-21 17:00,2007-11-06 08:01,2007-11-06 08:01,,2007-01-27 00:00,2007-01-27 00:00,,,2006-07-10 08:00,2006-08-04 17:00,,,,,PT_Normal,,,,,peq0OpliSTuLh3aGzdfDCA,bfH6wwyHS0GW9+Vc6ij4nx,,,N,0,0,,,2007-02-01 02:42,2007-02-04 01:05,hbe4678,hbe4678,,,0
1183,12457364,14517,6815971,13330,1,100,N,N,N,CP_Units,TT_Task,DT_FixedDUR2,RV_OK,TK_Complete,EM02MCV160,02M Design & Model Major Eq. Fdns,,,,0,0,0,0,160,0,0,0,,2005-10-17 08:00,2005-11-18 17:00,2007-05-07 08:00,2007-05-07 08:00,,2007-01-27 00:00,2007-01-27 00:00,,,2005-10-17 08:00,2005-11-11 17:00,,,,,PT_Normal,,,,,F/gRb3RGT6uaE2DrdlYjnA,gyxPEr429UiSPPr+XLGojh,,,N,0,0,,,2007-02-01 02:42,2007-02-04 01:05,hbe4678,hbe4678,,,0
1184,12457365,14517,6815971,13330,1,100,N,N,N,CP_Units,TT_Task,DT_FixedDUR2,RV_OK,TK_Complete,EM02MCV164,02M Update Model Major Eq. Fdns & Issue Dwgs-IFC,,,,0,0,0,0,120,0,0,0,,2006-04-20 00:00,2006-06-23 00:00,2007-09-04 08:01,2007-09-04 08:01,,2007-01-27 00:00,2007-01-27 00:00,,,2006-07-24 08:00,2006-08-11 17:00,,,,,PT_Normal,,,,,ZP2uTy32SgmFkP5/hk6X+g,S8aqaxMXaUKJ2EAPQPZD7x,,,N,0,0,,,2007-02-01 02:42,2007-02-04 01:05,hbe4678,hbe4678,,,0
1185,12457366,14517,6815971,13330,1,100,N,N,N,CP_Units,TT_Task,DT_FixedDUR2,RV_OK,TK_Complete,EM02MCV166,02M Conceptual Misc. Foundation Design/  Model,,,,0,0,0,0,120,0,0,0,,2006-06-19 00:00,2006-07-17 17:00,2008-01-02 08:01,2008-01-02 08:01,,2007-01-27 00:00,2007-01-27 00:00,,,2006-06-26 08:00,2006-07-14 17:00,,,,,PT_Normal,,,,,+3V1jdVyReaF9OtU3Ap6HQ,pierjpXut0GGlDemUJxcTB,,,N,0,0,,,2007-02-01 02:42,2007-02-04 01:05,hbe4678,hbe4678,,,0
1186,12457367,14517,6815971,13330,1,100,N,N,N,CP_Units,TT_Task,DT_FixedDUR2,RV_OK,TK_Complete,EM02MCV167,02M Update Model Misc Fdns & Issue Dwgs - IFC,,,,0,0,0,0,40,0,0,0,,2006-07-20 08:00,2006-08-21 17:00,2008-01-02 08:01,2008-01-02 08:01,,2007-01-27 00:00,2007-01-27 00:00,,,2006-07-20 08:00,2006-07-26 17:00,,,,,PT_Normal,,,,,g+MIGq5CRv2EJYDtYGGjnQ,vQUhjhgVv0q5bLeX5N6Grx,,,N,0,0,,,2007-02-01 02:42,2007-02-04 01:05,hbe4678,hbe4678,,,0
1187,12457368,14517,6815971,13330,1,100,N,N,N,CP_Units,TT_Task,DT_FixedDUR2,RV_OK,TK_Complete,EM02NCV160,02N Design & Model Major Eq. Fdns,,,,0,0,0,0,160,0,0,0,,2005-05-23 00:00,2005-10-21 17:00,2007-05-07 08:00,2007-05-07 08:00,,2007-01-27 00:00,2007-01-27 00:00,,,2005-07-13 08:00,2005-08-09 17:00,,,,,PT_Normal,,,,,q4GeDQGeRRGppS99AfaTvg,Yj5mvFFFj0K9ajlr16rM9R,,,N,0,0,,,2007-02-01 02:42,2007-02-04 01:05,hbe4678,hbe4678,,,0
1188,12457369,14517,6815971,13330,1,100,N,N,N,CP_Units,TT_Task,DT_FixedDUR2,RV_OK,TK_Complete,EM02ECV164,02E Update Model Major Eq. Fdns & Issue Dwgs-IFC,,,,0,0,0,0,120,0,0,0,,2006-02-01 08:00,2006-06-14 17:00,2007-12-09 08:01,2007-12-09 08:01,,2007-01-27 00:00,2007-01-27 00:00,,,2006-02-01 08:00,2006-02-21 17:00,,,,,PT_Normal,,,,,Q+mel1pQQ4CdZaBI+BsKrw,Klg0WlmuDEeatt6OwxhWJx,,,N,0,0,,,2007-02-01 02:42,2007-02-04 01:05,hbe4678,hbe4678,,,0
1189,12457370,14517,6815971,13330,1,100,N,N,N,CP_Units,TT_Task,DT_FixedDUR2,RV_OK,TK_Complete,EM02ECV166,02E Conceptual Misc. Foundations Design/ Model,,,,0,0,0,0,120,0,0,0,,2006-06-14 00:00,2006-07-17 17:00,2007-12-13 08:01,2007-12-13 08:01,,2007-01-27 00:00,2007-01-27 00:00,,,2006-06-15 08:00,2006-07-05 17:00,,,,,PT_Normal,,,,,MKOw8IQZSTC8sIRQCBWLVg,d8kJU6zcyEGP7ZlTDWbNuR,,,N,0,0,,,2007-02-01 02:42,2007-02-04 01:05,hbe4678,hbe4678,,,0
1190,12457371,14517,6815971,13330,1,100,N,N,N,CP_Units,TT_Task,DT_FixedDUR2,RV_OK,TK_Complete,EM02ECV167,02E Update Model Misc Fdns & Issue Dwgs - IFC,,,,0,0,0,0,48,0,0,0,2006-09-18 08:00,2006-09-11 00:00,2006-09-15 00:00,2007-12-13 08:01,2007-12-13 08:01,,2007-01-27 00:00,2007-01-27 00:00,,,2006-09-18 08:00,2006-09-25 17:00,,,,CS_MSOA,PT_Normal,,,,,0FGWLf+MREqwuSq637p8Vw,zQ5VpclRO0ehGI5APolyoh,,,N,0,0,,,2007-02-01 02:42,2007-02-04 01:05,hbe4678,hbe4678,,,0
1191,12457372,14517,6815971,13330,1,100,N,N,N,CP_Units,TT_Task,DT_FixedDUR2,RV_OK,TK_Complete,EM02FCV126,02F Conceptual Misc. Steel Design/ Model,,,,0,0,0,0,160,0,0,0,,2006-08-16 08:00,2006-11-06 17:00,2007-07-01 08:01,2007-07-01 08:01,,2007-01-27 00:00,2007-01-27 00:00,,,2006-08-16 08:00,2006-09-12 17:00,,,,,PT_Normal,,,,,788X6a2hT/WzZf/JvyIjvw,wYL7HJs2oEOGIpA1wp3fvh,,,N,0,0,,,2007-02-01 02:42,2007-02-04 01:05,hbe4678,hbe4678,,,0
1192,12457373,14517,6815971,13330,1,100,N,N,N,CP_Units,TT_Task,DT_FixedDUR2,RV_OK,TK_Complete,EM02FCV127,02F Model Misc. Steel & Issue Dwgs - IFC,,,,0,0,0,0,40,0,0,0,,2006-11-13 08:00,2006-12-08 00:00,2007-07-01 08:01,2007-07-01 08:01,,2007-01-27 00:00,2007-01-27 00:00,,,2006-11-13 08:00,2006-11-17 17:00,,,,,PT_Normal,,,,,irp7RLv2QQm4h17uzkXNsA,ZDNWbvu1sU+9E8StCU8OmB,,,N,0,0,,,2007-02-01 02:42,2007-02-04 01:05,hbe4678,hbe4678,,,0
1193,12457374,14517,6815971,13330,1,100,N,N,N,CP_Units,TT_Task,DT_FixedDUR2,RV_OK,TK_Complete,EM02FCV160,02F Design & Model Major Eq. Fdns,,,,0,0,0,0,160,0,0,0,,2005-12-14 00:00,2006-07-07 17:00,2007-11-18 08:01,2007-11-18 08:01,,2007-01-27 00:00,2007-01-27 00:00,,,2006-02-27 08:00,2006-03-24 17:00,,,,,PT_Normal,,,,,xQPsINg0R9CYBkASAGAP+g,ML9u+erKIUeFz04LXDqP0x,,,N,0,0,,,2007-02-01 02:42,2007-02-04 01:05,hbe4678,hbe4678,,,0
1194,12457375,14517,6815971,13330,1,100,N,N,N,CP_Units,TT_Task,DT_FixedDUR2,RV_OK,TK_Complete,EM02FCV164,02F Update Model Major Eq. Fdns & Issue Dwgs-IFC,,,,0,0,0,0,80,0,0,0,,2006-07-10 08:00,2006-08-11 17:00,2007-11-18 08:01,2007-11-18 08:01,,2007-01-27 00:00,2007-01-27 00:00,,,2006-07-10 08:00,2006-07-21 17:00,,,,,PT_Normal,,,,,iY8ZX8xWTFKBKalyquWemQ,Qn7oeRNp9EC4M2lj8CSfRR,,,N,0,0,,,2007-02-01 02:42,2007-02-04 01:05,hbe4678,hbe4678,,,0
1195,12457376,14517,6815971,13330,1,100,N,N,N,CP_Units,TT_Task,DT_FixedDUR2,RV_OK,TK_Complete,EM02FCV166,02F Conceptual Misc. Foundations Design/ Model,,,,0,0,0,0,120,0,0,0,,2006-07-03 08:00,2006-07-20 00:00,2007-12-27 08:01,2007-12-27 08:01,,2007-01-27 00:00,2007-01-27 00:00,,,2006-07-03 08:00,2006-07-21 17:00,,,,,PT_Normal,,,,,6SEzaPGFQNyThGkdQgRYkA,CbwcrDx73Uu/aCXRGJnipR,,,N,0,0,,,2007-02-01 02:42,2007-02-04 01:05,hbe4678,hbe4678,,,0
1196,12457377,14517,6815971,13330,1,100,N,N,N,CP_Units,TT_Task,DT_FixedDUR2,RV_OK,TK_Complete,EM02FCV167,02F Update Model Misc Fdns & Issue Dwgs - IFC,,,,0,0,0,0,40,0,0,0,,2006-11-13 08:00,2006-12-08 00:00,2007-12-27 08:01,2007-12-27 08:01,,2007-01-27 00:00,2007-01-27 00:00,,,2006-11-13 08:00,2006-11-17 17:00,,,,,PT_Normal,,,,,fpW9y8vmSI+MmMwWCiohIw,/OWlhJL0lEqq+5L+f2HtCB,,,N,0,0,,,2007-02-01 02:42,2007-02-04 01:05,hbe4678,hbe4678,,,0
1197,12457378,14517,6815971,13330,1,100,N,N,N,CP_Units,TT_Task,DT_FixedDUR2,RV_OK,TK_Complete,EM02GCV126,02G Conceptual Misc. Steel Design/ Model,,,,0,0,0,0,160,0,0,0,,2006-09-25 08:00,2006-12-08 00:00,2007-06-07 08:01,2007-06-07 08:01,,2007-02-02 17:00,2007-02-02 17:00,,,2006-09-25 08:00,2006-10-20 17:00,,,,,PT_Normal,,,,,+SblQOkfQOSBADgKlYSF/g,J82sin9nCUqT41cjJRCHiR,,,N,0,0,,,2007-02-01 02:42,2007-02-04 01:05,hbe4678,hbe4678,,,0
1198,12457379,14517,6815971,13330,1,100,N,N,N,CP_Units,TT_Task,DT_FixedDUR2,RV_OK,TK_Complete,EM02GCV127,02G Model Misc. Steel & Issue Dwgs - IFC,,,,0,0,0,0,40,0,0,0,2006-12-12 00:00,2006-12-11 08:00,2007-01-15 08:00,2007-06-07 08:01,2007-06-07 08:01,,2007-02-02 17:00,2007-02-02 17:00,,,2006-12-11 08:00,2006-12-15 17:00,,,,CS_MSOA,PT_Normal,,,,,XZ5ReJF2QjGcfQZZBuHF1g,nL1vXqPeXUC/acOgqy+cMh,,,N,0,0,,,2007-02-01 02:42,2007-02-04 01:05,hbe4678,hbe4678,,,0
1199,12457380,14517,6815971,13330,1,100,N,N,N,CP_Units,TT_Task,DT_FixedDUR2,RV_OK,TK_Complete,EM02GCV160,02G Design & Model Major Eq. Fdns,,,,0,0,0,0,320,0,0,0,,2005-09-05 00:00,2006-03-31 17:00,2007-05-23 08:00,2007-05-23 08:00,,2007-01-27 00:00,2007-01-27 00:00,,,2005-09-19 08:00,2005-11-11 17:00,,,,,PT_Normal,,,,,L9NlwuydSeGT7APyUGrX/Q,gfS3WIyEDE6k2pElVcvz0R,,,N,0,0,,,2007-02-01 02:42,2007-02-04 01:05,hbe4678,hbe4678,,,0
1200,12457381,14517,6815971,13330,1,100,N,N,N,CP_Units,TT_Task,DT_FixedDUR2,RV_OK,TK_Complete,EM02GCV164,02G Update Model Major Eq. Fdns & Issue Dwgs-IFC,,,,0,0,0,0,232,0,0,0,,2006-07-04 08:00,2006-10-03 00:00,2007-07-02 08:01,2007-07-02 08:01,,2007-01-27 00:00,2007-01-27 00:00,,,2006-07-04 08:00,2006-08-11 17:00,,,,,PT_Normal,,,,,4xN97QinRjOz3xr56FVR7A,3hkHOLiC+EWoG5bTo1FGwx,,,N,0,0,,,2007-02-01 02:42,2007-02-04 01:05,hbe4678,hbe4678,,,0
1201,12457382,14517,6815971,13330,1,100,N,N,N,CP_Units,TT_Task,DT_FixedDUR2,RV_OK,TK_Complete,EM02GCV166,02G Conceptual Misc. Foundations Design/ Model,,,,0,0,0,0,120,0,0,0,,2006-10-02 08:00,2006-12-08 00:00,2007-10-02 08:00,2007-10-02 08:00,,2007-02-02 17:00,2007-02-02 17:00,,,2006-10-02 08:00,2006-10-20 17:00,,,,,PT_Normal,,,,,MNw90a8XTFiJmdcXJ691nw,rogCE84JX0WiDqD84SR+8x,,,N,0,0,,,2007-02-01 02:42,2007-02-04 01:05,hbe4678,hbe4678,,,0
1202,12457383,14517,6815971,13330,1,100,N,N,N,CP_Units,TT_Task,DT_FixedDUR2,RV_OK,TK_Complete,EM02GCV167,02G Update Model Misc Fdns & Issue Dwgs - IFC,,,,0,0,0,0,40,0,0,0,2006-12-12 00:00,2006-12-11 08:00,2007-01-15 08:01,2007-10-02 08:00,2007-10-02 08:00,,2007-02-02 17:00,2007-02-02 17:00,,,2006-12-11 08:00,2006-12-15 17:00,,,,CS_MSOA,PT_Normal,,,,,ynjmN6ZET2WYIXzjrlkNYA,0zlbnDfteEaRq310JB/SUB,,,N,0,0,,,2007-02-01 02:42,2007-02-04 01:05,hbe4678,hbe4678,,,0
1203,12457384,14517,6815971,13330,1,100,N,N,N,CP_Units,TT_Task,DT_FixedDUR2,RV_OK,TK_Complete,EM02JCV120,02J Design & Model Major Structural Steel,,,,0,0,0,0,240,0,0,0,,2005-07-07 08:00,2005-11-11 17:00,2007-05-07 08:00,2007-05-07 08:00,,2007-01-27 00:00,2007-01-27 00:00,,,2005-07-07 08:00,2005-08-17 17:00,,,,,PT_Normal,,,,,E9cSqXYjQSiXNOBTYpUCKw,tvDWd6MXokO35PujIP7prh,,,N,0,0,,,2007-02-01 02:42,2007-02-04 01:05,hbe4678,hbe4678,,,0
1204,12457385,14517,6815971,13330,1,100,N,N,N,CP_Units,TT_Task,DT_FixedDUR2,RV_OK,TK_Complete,EM02JCV122,02J Update Model Struct Steel & Issue Dwgs - IFC,,,,0,0,0,0,120,0,0,0,,2006-06-05 00:00,2006-06-30 00:00,2007-05-21 08:01,2007-05-21 08:01,,2007-01-27 00:00,2007-01-27 00:00,,,2006-07-07 08:00,2006-07-27 17:00,,,,,PT_Normal,,,,,tEiOqSJ1SJqcC97fjo28TQ,KKr852PJ506bPmKAVpP/7x,,,N,0,0,,,2007-02-01 02:42,2007-02-04 01:05,hbe4678,hbe4678,,,0
1205,12457386,14517,6815971,13330,1,100,N,N,N,CP_Units,TT_Task,DT_FixedDUR2,RV_OK,TK_Complete,EM02JCV125,02J Design & Model Structure Fdns,,,,0,0,0,0,240,0,0,0,,2005-07-07 08:00,2005-11-11 17:00,2007-05-07 08:00,2007-05-07 08:00,,2007-01-27 00:00,2007-01-27 00:00,,,2005-07-07 08:00,2005-08-17 17:00,,,,,PT_Normal,,,,,VTa/aO/2RPmA9LkpeLmkJw,XQ/e4tWzcUeq84F+A0m/7R,,,N,0,0,,,2007-02-01 02:42,2007-02-04 01:05,hbe4678,hbe4678,,,0
1206,12457387,14517,6815971,13330,1,100,N,N,N,CP_Units,TT_Task,DT_FixedDUR2,RV_OK,TK_Complete,EM02JCV126,02J Misc. Steel Design/ Model,,,,0,0,0,0,160,0,0,0,,2006-05-22 08:00,2006-06-14 17:00,2007-06-04 08:01,2007-06-04 08:01,,2007-01-27 00:00,2007-01-27 00:00,,,2006-05-22 08:00,2006-06-16 17:00,,,,,PT_Normal,,,,,/Xw5dhG/RDiWfp+PxHoJ8Q,72Bz3+MCjkyScIZZmYYv5h,,,N,0,0,,,2007-02-01 02:42,2007-02-04 01:05,hbe4678,hbe4678,,,0
1207,12457388,14517,6815971,13330,1,100,N,N,N,CP_Units,TT_Task,DT_FixedDUR2,RV_OK,TK_Complete,EM02JCV127,02J Model Misc. Steel & Issue Dwgs - IFC,,,,0,0,0,0,40,0,0,0,,2006-10-04 08:00,2006-10-27 00:00,2007-06-04 08:01,2007-06-04 08:01,,2007-01-27 00:00,2007-01-27 00:00,,,2006-10-04 08:00,2006-10-10 17:00,,,,,PT_Normal,,,,,gu38eDstRgOeG3gt9cGajQ,hzXYVz31MUCrd3rM2BZjsx,,,N,0,0,,,2007-02-01 02:42,2007-02-04 01:05,hbe4678,hbe4678,,,0
1208,12457389,14517,6815971,13330,1,100,N,N,N,CP_Units,TT_Task,DT_FixedDUR2,RV_OK,TK_Complete,EM02JCV128,02J Update Model Structure Fdns & Issue Dwgs - IFC,,,,0,0,0,0,120,0,0,0,,2006-04-06 00:00,2006-04-06 00:00,2007-08-12 08:01,2007-08-12 08:01,,2007-01-27 00:00,2007-01-27 00:00,,,2006-07-10 08:00,2006-07-28 17:00,,,,,PT_Normal,,,,,jmxcdM4iStKZSCaEJutCRA,2F4u8c5ekUmmkcfSEMuIlB,,,N,0,0,,,2007-02-01 02:42,2007-02-04 01:05,hbe4678,hbe4678,,,0
1209,12457390,14517,6815971,13330,1,100,N,N,N,CP_Units,TT_Task,DT_FixedDUR2,RV_OK,TK_Complete,EM02LCV166,02L Conceptual Misc. Foundation Design/  Model,,,,0,0,0,0,120,0,0,0,,2006-06-12 00:00,2006-08-01 00:00,2007-07-23 08:01,2007-07-23 08:01,,2007-01-27 00:00,2007-01-27 00:00,,,2006-06-22 08:00,2006-07-12 17:00,,,,,PT_Normal,,,,,VHM864XtTPaOJ6GpIFdjvw,,,,N,0,0,,,2007-02-01 02:42,2007-02-04 01:05,hbe4678,hbe4678,,,0
1210,12457391,14517,6815971,13330,1,100,N,N,N,CP_Units,TT_Task,DT_FixedDUR2,RV_OK,TK_Complete,EM02LCV167,02L Model Misc Fdns & Issue Dwgs - IFC,,,,0,0,0,0,40,0,0,0,,2006-09-21 00:00,2006-10-27 17:00,2007-07-23 08:01,2007-07-23 08:01,,2007-01-27 00:00,2007-01-27 00:00,,,2006-10-16 08:00,2006-10-20 17:00,,,,,PT_Normal,,,,,fZ+Ou9C5TlG/gRF0e8EkKQ,,,,N,0,0,,,2007-02-01 02:42,2007-02-04 01:05,hbe4678,hbe4678,,,0
1211,12457392,14517,6815971,13330,1,100,N,N,N,CP_Units,TT_Task,DT_FixedDUR2,RV_OK,TK_Complete,EM02BCV160,02B Design & Model Major Eq. Fdns,,,,0,0,0,0,160,0,0,0,,2005-07-04 00:00,2005-11-28 00:00,2007-04-01 08:01,2007-04-01 08:01,,2007-01-27 00:00,2007-01-27 00:00,,,2005-07-28 08:00,2005-08-24 17:00,,,,,PT_Normal,,,,,SGoSJIegRReuzaLhI63HQg,JIMWyNGt/0mRe8+Al4o96B,,,N,0,0,,,2007-02-01 02:42,2007-02-04 01:05,hbe4678,hbe4678,,,0
1212,12457393,14517,6815971,13330,1,100,N,N,N,CP_Units,TT_Task,DT_FixedDUR2,RV_OK,TK_Complete,EM02BCV164,02B Update Model Major Eq. Fdns & Issue Dwgs-IFC,,,,0,0,0,0,80,0,0,0,,2006-01-31 08:00,2006-04-10 00:00,2007-12-04 08:01,2007-12-04 08:01,,2007-01-27 00:00,2007-01-27 00:00,,,2006-01-31 08:00,2006-02-13 17:00,,,,,PT_Normal,,,,,nTPVdC6oTw+md4OZ/g0viA,e9AO8NAx8ka0Df0TGJ8ish,,,N,0,0,,,2007-02-01 02:42,2007-02-04 01:05,hbe4678,hbe4678,,,0
1213,12457394,14517,6815971,13330,1,100,N,N,N,CP_Units,TT_Task,DT_FixedDUR2,RV_OK,TK_Complete,EM02DCV120,02D Design & Model Major Structural Steel,,,,0,0,0,0,160,0,0,0,,2005-07-06 08:00,2006-01-12 17:00,2007-04-24 08:01,2007-04-24 08:01,,2007-01-27 00:00,2007-01-27 00:00,,,2005-07-06 08:00,2005-08-02 17:00,,,,,PT_Normal,,,,,kW5k+Oc4TDCkwYTl71xVrA,qmIf7y/4U0GPUzNellFhJR,,,N,0,0,,,2007-02-01 02:42,2007-02-04 01:05,hbe4678,hbe4678,,,0
1214,12457395,14517,6815971,13330,1,100,N,N,N,CP_Units,TT_Task,DT_FixedDUR2,RV_OK,TK_Complete,EM02DCV122,02D Update Model Struct Steel & Issue Dwgs - IFC,,,,0,0,0,0,240,0,0,0,,2006-06-08 00:00,2006-07-10 00:00,2007-05-15 08:01,2007-05-15 08:01,,2007-01-27 00:00,2007-01-27 00:00,,,2006-06-12 08:00,2006-07-21 17:00,,,,,PT_Normal,,,,,89unKtEMRwOSR4N8+PRvjw,IbKUGzKOfkG8DO8R1Milxh,,,N,0,0,,,2007-02-01 02:42,2007-02-04 01:05,hbe4678,hbe4678,,,0
1215,12457396,14517,6815971,13330,1,100,N,N,N,CP_Units,TT_Task,DT_FixedDUR2,RV_OK,TK_Complete,EM02DCV125,02D Design & Model Structural Fdns,,,,0,0,0,0,160,0,0,0,,2005-07-06 08:00,2006-01-12 17:00,2007-04-24 08:01,2007-04-24 08:01,,2007-01-27 00:00,2007-01-27 00:00,,,2005-07-06 08:00,2005-08-02 17:00,,,,,PT_Normal,,,,,85jgYXUwTymGRKln8dPd/Q,PHIpixc1uEqFMlZPfmqOax,,,N,0,0,,,2007-02-01 02:42,2007-02-04 01:05,hbe4678,hbe4678,,,0
1216,12457397,14517,6815971,13330,1,100,N,N,N,CP_Units,TT_Task,DT_FixedDUR2,RV_OK,TK_Complete,EM02DCV126,02D Conceptual Misc. Steel Design/ Model,,,,0,0,0,0,160,0,0,0,,2006-05-15 08:00,2006-06-09 00:00,2007-05-29 08:01,2007-05-29 08:01,,2007-01-27 00:00,2007-01-27 00:00,,,2006-05-15 08:00,2006-06-09 17:00,,,,,PT_Normal,,,,,BPNftdIlSIGU+QzjlEXFPQ,B/KJ3rH3SkS+ZjzsuWmWRx,,,N,0,0,,,2007-02-01 02:42,2007-02-04 01:05,hbe4678,hbe4678,,,0
1217,12457398,14517,6815971,13330,1,100,N,N,N,CP_Units,TT_Task,DT_FixedDUR2,RV_OK,TK_Complete,EM02DCV127,02D Model Misc. Steel & Issue Dwgs - IFC,,,,0,0,0,0,40,0,0,0,,2006-08-14 08:00,2006-08-24 00:00,2007-05-29 08:01,2007-05-29 08:01,,2007-01-27 00:00,2007-01-27 00:00,,,2006-08-14 08:00,2006-08-18 17:00,,,,,PT_Normal,,,,,lcjizQ5BTKK+8u88nlgsig,vXJr51K+cUmsIeyUrLoSWB,,,N,0,0,,,2007-02-01 02:42,2007-02-04 01:05,hbe4678,hbe4678,,,0
1218,12457399,14517,6815971,13330,1,100,N,N,N,CP_Units,TT_Task,DT_FixedDUR2,RV_OK,TK_Complete,EM02DCV128,02D Update Model Structural Fdns & Issue Dwgs - IFC,,,,0,0,0,0,120,0,0,0,,2006-05-17 00:00,2006-06-07 00:00,2007-12-09 08:01,2007-12-09 08:01,,2007-01-27 00:00,2007-01-27 00:00,,,2006-07-10 08:00,2006-07-28 17:00,,,,,PT_Normal,,,,,OSgBrx0wT9K0OeTTiVDUDw,+HP1nuTqEESi//sElQIYSB,,,N,0,0,,,2007-02-01 02:42,2007-02-04 01:05,hbe4678,hbe4678,,,0
1219,12457400,14517,6815971,13330,1,100,N,N,N,CP_Units,TT_Task,DT_FixedDUR2,RV_OK,TK_Complete,EM02DCV160,02D Design & Model Major Eq. Fdns,,,,0,0,0,0,160,0,0,0,,2005-10-10 08:00,2005-11-30 00:00,2007-04-24 08:01,2007-04-24 08:01,,2007-01-27 00:00,2007-01-27 00:00,,,2005-10-10 08:00,2005-11-04 17:00,,,,,PT_Normal,,,,,ymzVsyUFSya5qdyvVikxxg,V/w0YyRac0WjDkIQFtiDwh,,,N,0,0,,,2007-02-01 02:42,2007-02-04 01:05,hbe4678,hbe4678,,,0
1220,12457401,14517,6815971,13330,1,100,N,N,N,CP_Units,TT_Task,DT_FixedDUR2,RV_OK,TK_Complete,EM02DCV164,02D Update Model Major Eq. Fdns & Issue Dwgs-IFC,,,,0,0,0,0,120,0,0,0,,2006-05-15 08:00,2006-06-02 17:00,2007-12-09 08:01,2007-12-09 08:01,,2007-01-27 00:00,2007-01-27 00:00,,,2006-05-15 08:00,2006-06-02 17:00,,,,,PT_Normal,,,,,C8hpR9ltT8uFHfFtr9HkNA,d8Zs4ojsrUqD5eZ4T9B6pR,,,N,0,0,,,2007-02-01 02:42,2007-02-04 01:05,hbe4678,hbe4678,,,0
1221,12457402,14517,6815971,13330,1,100,N,N,N,CP_Units,TT_Task,DT_FixedDUR2,RV_OK,TK_Complete,EM02DCV166,02D Conceptual Misc. Foundations Design/ Model,,,,0,0,0,0,120,0,0,0,,2006-05-16 00:00,2006-06-09 00:00,2008-01-26 17:00,2008-01-26 17:00,,2007-01-27 00:00,2007-01-27 00:00,,,2006-05-19 08:00,2006-06-08 17:00,,,,,PT_Normal,,,,,GEiWAXTaRaWmHlONUWkvbw,Xunrk+9E7kan/Q7XQ6wcrh,,,N,0,0,,,2007-02-01 02:42,2007-02-04 01:05,hbe4678,hbe4678,,,0
1222,12457403,14517,6815971,13330,1,100,N,N,N,CP_Units,TT_Task,DT_FixedDUR2,RV_OK,TK_Complete,EM02DCV167,02D Update Model Misc Fdns & Issue Dwgs - IFC,,,,0,0,0,0,40,0,0,0,,2006-08-14 08:00,2006-08-24 00:00,2008-01-26 17:00,2008-01-26 17:00,,2007-01-27 00:00,2007-01-27 00:00,,,2006-08-14 08:00,2006-08-18 17:00,,,,,PT_Normal,,,,,SkrpbHqgTwaGiXoYDW3OLQ,TOXWEZTyykCUfHMGpAJ5EB,,,N,0,0,,,2007-02-01 02:42,2007-02-04 01:05,hbe4678,hbe4678,,,0
1223,12457404,14517,6815971,13330,1,100,N,N,N,CP_Units,TT_Task,DT_FixedDUR2,RV_OK,TK_Complete,EM02ECV120,02E Design & Model Major Structural Steel,,,,0,0,0,0,240,0,0,0,,2005-06-27 08:00,2005-12-02 17:00,2007-04-15 08:01,2007-04-15 08:01,,2007-01-27 00:00,2007-01-27 00:00,,,2005-06-27 08:00,2005-08-09 17:00,,,,,PT_Normal,,,,,B+1swsbmT263fiN5wr3oxg,qPs1ozaW0kKCGE0zLGnRix,,,N,0,0,,,2007-02-01 02:42,2007-02-04 01:05,hbe4678,hbe4678,,,0
1224,12457405,14517,6815971,13330,1,100,N,N,N,CP_Units,TT_Task,DT_FixedDUR2,RV_OK,TK_Complete,EM02ECV122,02E Update Model Struct Steel & Issue Dwgs - IFC,,,,0,0,0,0,120,0,0,0,,2006-02-01 08:00,2006-06-30 00:00,2007-06-24 08:01,2007-06-24 08:01,,2007-01-27 00:00,2007-01-27 00:00,,,2006-02-01 08:00,2006-02-21 17:00,,,,,PT_Normal,,,,,+TbdtFuzQOuw74qsqWe1PA,mpo29+ZFn0ugJuCiLoJV1R,,,N,0,0,,,2007-02-01 02:42,2007-02-04 01:05,hbe4678,hbe4678,,,0
1225,12457406,14517,6815971,13330,1,100,N,N,N,CP_Units,TT_Task,DT_FixedDUR2,RV_OK,TK_Complete,EM02ECV125,02E Design & Model Structural Fdns,,,,0,0,0,0,240,0,0,0,,2005-06-27 08:00,2005-12-02 17:00,2007-04-15 08:01,2007-04-15 08:01,,2007-01-27 00:00,2007-01-27 00:00,,,2005-06-27 08:00,2005-08-09 17:00,,,,,PT_Normal,,,,,x08FGmJYTkOGTKKVyWWjkg,4kyIuY+gAEStrlF8gj1Knx,,,N,0,0,,,2007-02-01 02:42,2007-02-04 01:05,hbe4678,hbe4678,,,0
1226,12457407,14517,6815971,13330,1,100,N,N,N,CP_Units,TT_Task,DT_FixedDUR2,RV_OK,TK_Complete,EM02ECV126,02E Conceptual Misc. Steel Design/ Model,,,,0,0,0,0,160,0,0,0,,2006-08-08 08:00,2006-09-08 00:00,2007-04-15 08:01,2007-04-15 08:01,,2007-01-27 00:00,2007-01-27 00:00,,,2006-08-08 08:00,2006-09-04 17:00,,,,,PT_Normal,,,,,xsB6YbIvSCGZOKy3sPWRVw,vhiJ94roe06GM3lsglz1xh,,,N,0,0,,,2007-02-01 02:42,2007-02-04 01:05,hbe4678,hbe4678,,,0
1227,12457408,14517,6815971,13330,1,100,N,N,N,CP_Units,TT_Task,DT_FixedDUR2,RV_OK,TK_Complete,EM02ECV127,02E Model Misc. Steel & Issue Dwgs - IFC,,,,0,0,0,0,40,0,0,0,2006-09-19 08:00,2006-09-11 00:00,2006-09-15 00:00,2007-04-15 08:01,2007-04-15 08:01,,2007-01-27 00:00,2007-01-27 00:00,,,2006-09-19 08:00,2006-09-25 17:00,,,,CS_MSOA,PT_Normal,,,,,AbvjX8kORrudk1+5xD/aAA,un2MAVw9YUeCNU/tpfUjPR,,,N,0,0,,,2007-02-01 02:42,2007-02-04 01:05,hbe4678,hbe4678,,,0
1228,12457409,14517,6815971,13330,1,100,N,N,N,CP_Units,TT_Task,DT_FixedDUR2,RV_OK,TK_Complete,EM02ECV128,02E Update Model Structural Fdns & Issue Dwgs - IFC,,,,0,0,0,0,120,0,0,0,,2006-05-15 00:00,2006-06-13 00:00,2007-12-09 08:01,2007-12-09 08:01,,2007-01-27 00:00,2007-01-27 00:00,,,2006-07-10 08:00,2006-07-28 17:00,,,,,PT_Normal,,,,,XyM2CVVyRryPFgSp8IChCQ,aH+R8plp/kyl+gxZldyfyB,,,N,0,0,,,2007-02-01 02:42,2007-02-04 01:05,hbe4678,hbe4678,,,0
1229,12457410,14517,6815971,13330,1,100,N,N,N,CP_Units,TT_Task,DT_FixedDUR2,RV_OK,TK_Complete,EM02ECV160,02E Design & Model Major Eq. Fdns,,,,0,0,0,0,240,0,0,0,,2005-09-23 00:00,2005-12-21 00:00,2007-04-15 08:01,2007-04-15 08:01,,2007-01-27 00:00,2007-01-27 00:00,,,2005-09-15 08:00,2005-10-26 17:00,,,,,PT_Normal,,,,,wijo4h78QrO68pHN+5NZIw,Pa7n6UoXx0eWY+0merF/Ux,,,N,0,0,,,2007-02-01 02:42,2007-02-04 01:05,hbe4678,hbe4678,,,0
1230,12457411,14517,6815971,13330,1,100,N,N,N,CP_Units,TT_Task,DT_FixedDUR2,RV_OK,TK_Complete,EM02ACV164,02A Update Model Major Eq. Fdns & Issue Dwgs-IFC,,,,0,0,0,0,240,0,0,0,,2006-03-01 00:00,2006-09-05 00:00,2007-09-04 08:01,2007-09-04 08:01,,2007-01-27 00:00,2007-01-27 00:00,,,2006-06-12 08:01,2006-07-24 08:01,,,,,PT_Normal,,,,,yOhneSk8QCKhQfAYbmDFzg,SXFEtS00QE2l3J4WfnTKOB,,,N,0,0,,,2007-02-01 02:42,2007-02-04 01:05,hbe4678,hbe4678,,,0
1231,12457412,14517,6815971,13330,1,100,N,N,N,CP_Units,TT_Task,DT_FixedDUR2,RV_OK,TK_Complete,EM02ACV166,02A Conceptual Misc. Foundation Design/ Model,,,,0,0,0,0,120,0,0,0,,2006-06-14 00:00,2006-07-13 17:00,2007-12-08 08:01,2007-12-08 08:01,,2007-01-27 00:00,2007-01-27 00:00,,,2006-06-20 08:00,2006-07-10 17:00,,,,,PT_Normal,,,,,Bn+3DkhOSmaEaMT7peazcQ,Rhg2qFGZcESoX7YkE0EpoB,,,N,0,0,,,2007-02-01 02:42,2007-02-04 01:05,hbe4678,hbe4678,,,0
1232,12457413,14517,6815971,13330,1,100,N,N,N,CP_Units,TT_Task,DT_FixedDUR2,RV_OK,TK_Complete,EM02ACV167,02A Update Model Misc Fdns & Issue Dwgs - IFC,,,,0,0,0,0,240,0,0,0,,2006-07-31 08:00,2006-09-08 00:00,2007-12-08 08:01,2007-12-08 08:01,,2007-01-27 00:00,2007-01-27 00:00,,,2006-07-31 08:00,2006-09-08 17:00,,,,,PT_Normal,,,,,wTRb9SeuQ4yEQFE1Nl33Qw,mlb0oM4/F0upZziAZ9fYOR,,,N,0,0,,,2007-02-01 02:42,2007-02-04 01:05,hbe4678,hbe4678,,,0
1233,12457414,14517,6815971,13330,1,100,N,N,N,CP_Units,TT_Task,DT_FixedDUR2,RV_OK,TK_Complete,EM02ACV120,02A Design & Model Major Structural Steel,,,,0,0,0,0,160,0,0,0,,2005-07-20 08:00,2005-10-28 00:00,2007-05-07 08:00,2007-05-07 08:00,,2007-01-27 00:00,2007-01-27 00:00,,,2005-07-20 08:00,2005-08-16 17:00,,,,,PT_Normal,,,,,IvqaIliVQr2uYdm3RHOP4g,jS9yu7h8s0KkWBwoELZKpR,,,N,0,0,,,2007-02-01 02:42,2007-02-04 01:05,hbe4678,hbe4678,,,0
1234,12457415,14517,6815971,13330,1,100,N,N,N,CP_Units,TT_Task,DT_FixedDUR2,RV_OK,TK_Complete,EM02ACV122,02A Update Model Struct Steel & Issue Dwgs - IFC,,,,0,0,0,0,200,0,0,0,,2006-01-30 08:00,2006-07-26 00:00,2007-05-27 08:01,2007-05-27 08:01,,2007-01-27 00:00,2007-01-27 00:00,,,2006-01-30 08:00,2006-03-03 17:00,,,,,PT_Normal,,,,,hczoxSo2Qp6f+Fjruv6lFQ,uF6RugdUj0G7ZsUr512MRB,,,N,0,0,,,2007-02-01 02:42,2007-02-04 01:05,hbe4678,hbe4678,,,0
1235,12457416,14517,6815971,13330,1,100,N,N,N,CP_Units,TT_Task,DT_FixedDUR2,RV_OK,TK_Complete,EM02ACV125,02A Design & Model Structural Fdns,,,,0,0,0,0,160,0,0,0,,2005-07-20 08:00,2005-10-28 00:00,2007-05-07 08:00,2007-05-07 08:00,,2007-01-27 00:00,2007-01-27 00:00,,,2005-07-20 08:00,2005-08-16 17:00,,,,,PT_Normal,,,,,aMwydOlrT4uXTK9iKkMFTQ,zFwsJvkAa0q96l0hdFZ1mB,,,N,0,0,,,2007-02-01 02:42,2007-02-04 01:05,hbe4678,hbe4678,,,0
1236,12457417,14517,6815971,13330,1,100,N,N,N,CP_Units,TT_Task,DT_FixedDUR2,RV_OK,TK_Complete,EM02ACV126,02A Conceptual Misc. Steel Design/ Model,,,,0,0,0,0,160,0,0,0,,2006-06-09 00:00,2006-07-20 17:00,2007-06-10 08:01,2007-06-10 08:01,,2007-01-27 00:00,2007-01-27 00:00,,,2006-06-12 08:00,2006-07-07 17:00,,,,,PT_Normal,,,,,XPTWaFNHTSWZnItQ16MhXg,++lskqHZfEOG5w+5+xHsDB,,,N,0,0,,,2007-02-01 02:42,2007-02-04 01:05,hbe4678,hbe4678,,,0
1237,12457418,14517,6815971,13330,1,100,N,N,N,CP_Units,TT_Task,DT_FixedDUR2,RV_OK,TK_Complete,EM02ACV127,02A Model Misc. Steel & Issue Dwgs - IFC,,,,0,0,0,0,240,0,0,0,,2006-07-20 00:00,2006-09-08 00:00,2007-06-10 08:01,2007-06-10 08:01,,2007-01-27 00:00,2007-01-27 00:00,,,2006-07-21 08:00,2006-08-31 17:00,,,,,PT_Normal,,,,,I5a3U2ECRaGhwojA+OFA0w,hcf3bW7q0EqMS4J3j9wCWR,,,N,0,0,,,2007-02-01 02:42,2007-02-04 01:05,hbe4678,hbe4678,,,0
1238,12457419,14517,6815971,13330,1,100,N,N,N,CP_Units,TT_Task,DT_FixedDUR2,RV_OK,TK_Complete,EM02ACV128,02A Update Model Structural Fdns & Issue Dwgs - IFC,,,,0,0,0,0,120,0,0,0,,2006-03-13 00:00,2006-04-12 17:00,2007-09-04 08:01,2007-09-04 08:01,,2007-01-27 00:00,2007-01-27 00:00,,,2006-03-23 08:00,2006-04-12 17:00,,,,,PT_Normal,,,,,6v2+LKzpRjWWgi8DRoGQZw,Dhhbat7raUert+eOwREKkR,,,N,0,0,,,2007-02-01 02:42,2007-02-04 01:05,hbe4678,hbe4678,,,0
1239,12457420,14517,6815971,13330,1,100,N,N,N,CP_Units,TT_Task,DT_FixedDUR2,RV_OK,TK_Complete,EM02ACV160,02A Design & Model Major Eq. Fdns,,,,0,0,0,0,160,0,0,0,,2005-09-12 08:00,2006-01-06 17:00,2007-05-07 08:00,2007-05-07 08:00,,2007-01-27 00:00,2007-01-27 00:00,,,2005-09-12 08:00,2005-10-07 17:00,,,,,PT_Normal,,,,,6KrvC8OZRlyBZ1kyR8AAqw,9t5uNXwiF0GcPTw4/9rLrB,,,N,0,0,,,2007-02-01 02:42,2007-02-04 01:05,hbe4678,hbe4678,,,0
1240,12457421,14517,6815971,13330,1,100,N,N,N,CP_Units,TT_Task,DT_FixedDUR2,RV_OK,TK_Complete,EM02LCV120,02L Design & Model Major Structural Steel,,,,0,0,0,0,528,0,0,0,,2005-09-02 00:00,2005-11-04 17:00,2007-01-09 08:01,2007-01-09 08:01,,2007-01-27 00:00,2007-01-27 00:00,,,2005-09-19 08:00,2005-12-19 17:00,,,,,PT_Normal,,,,,hKkRV/SlQb6fYjTY1FXiNA,,,,N,0,0,,,2007-02-01 02:42,2007-02-04 01:05,hbe4678,hbe4678,,,0
1241,12457422,14517,6815971,13330,1,100,N,N,N,CP_Units,TT_Task,DT_FixedDUR2,RV_OK,TK_Complete,EM02LCV122,02L Update Model Struct Steel & Issue Dwgs - IFC,,,,0,0,0,0,360,0,0,0,,2006-06-05 08:00,2006-08-25 17:00,2007-01-09 08:01,2007-01-09 08:01,,2007-01-27 00:00,2007-01-27 00:00,,,2006-06-05 08:00,2006-08-04 17:00,,,,,PT_Normal,,,,,WWYEjCONQnGhS8fY9zbh6Q,,,,N,0,0,,,2007-02-01 02:42,2007-02-04 01:05,hbe4678,hbe4678,,,0
1242,12457423,14517,6815971,13330,1,100,N,N,N,CP_Units,TT_Task,DT_FixedDUR2,RV_OK,TK_Complete,EM02LCV125,02L Design & Model Structural Fdns,,,,0,0,0,0,504,0,0,0,,2005-09-07 00:00,2005-12-14 00:00,2007-01-09 08:01,2007-01-09 08:01,,2007-01-27 00:00,2007-01-27 00:00,,,2005-09-22 08:00,2005-12-19 17:00,,,,,PT_Normal,,,,,iDJVwhEXQbqFYGAG1FGF3g,,,,N,0,0,,,2007-02-01 02:42,2007-02-04 01:05,hbe4678,hbe4678,,,0
1243,12457424,14517,6815971,13330,1,100,N,N,N,CP_Units,TT_Task,DT_FixedDUR2,RV_OK,TK_Complete,EM02LCV126,02L Conceptual Misc. Steel Design/ Model,,,,0,0,0,0,160,0,0,0,,2006-06-14 08:00,2006-08-01 00:00,2007-05-15 08:01,2007-05-15 08:01,,2007-01-27 00:00,2007-01-27 00:00,,,2006-06-14 08:00,2006-07-11 17:00,,,,,PT_Normal,,,,,CHHmDVYhT0yBla4J1pxKgg,,,,N,0,0,,,2007-02-01 02:42,2007-02-04 01:05,hbe4678,hbe4678,,,0
1244,12457425,14517,6815971,13330,1,100,N,N,N,CP_Units,TT_Task,DT_FixedDUR2,RV_OK,TK_Complete,EM02LCV127,02L Model Misc. Steel & Issue Dwgs - IFC,,,,0,0,0,0,40,0,0,0,,2006-09-21 00:00,2006-09-27 00:00,2007-05-15 08:01,2007-05-15 08:01,,2007-01-27 00:00,2007-01-27 00:00,,,2006-10-16 08:00,2006-10-20 17:00,,,,,PT_Normal,,,,,NovB+gsRQNWzI4N0P1BBrw,,,,N,0,0,,,2007-02-01 02:42,2007-02-04 01:05,hbe4678,hbe4678,,,0
1245,12457426,14517,6815971,13330,1,100,N,N,N,CP_Units,TT_Task,DT_FixedDUR2,RV_OK,TK_Complete,EM02LCV128,02L Update Model Structural Fdns & Issue Dwgs - IFC,,,,0,0,0,0,120,0,0,0,,2006-07-24 08:00,2006-08-23 00:00,2007-03-20 08:01,2007-03-20 08:01,,2007-01-27 00:00,2007-01-27 00:00,,,2006-07-24 08:00,2006-08-11 17:00,,,,,PT_Normal,,,,,B5uhuMnkSQWVmzoaa5YxsA,,,,N,0,0,,,2007-02-01 02:42,2007-02-04 01:05,hbe4678,hbe4678,,,0
1246,12457427,14517,6815971,13330,1,100,N,N,N,CP_Units,TT_Task,DT_FixedDUR2,RV_OK,TK_Complete,EM02LCV160,02L Design & Model Major Eq. Fdns,,,,0,0,0,0,240,0,0,0,,2005-10-31 08:00,2005-12-14 00:00,2007-01-09 08:01,2007-01-09 08:01,,2007-01-27 00:00,2007-01-27 00:00,,,2005-10-31 08:00,2005-12-09 17:00,,,,,PT_Normal,,,,,v8T+7rPlRhW/0unAjMpbug,,,,N,0,0,,,2007-02-01 02:42,2007-02-04 01:05,hbe4678,hbe4678,,,0
1247,12457428,14517,6815971,13330,1,100,N,N,N,CP_Units,TT_Task,DT_FixedDUR2,RV_OK,TK_Complete,EM02LCV164,02L Update Model Major Eq. Fdns & Issue Dwgs-IFC,,,,0,0,0,0,120,0,0,0,,2006-04-20 00:00,2006-07-27 00:00,2007-03-20 08:01,2007-03-20 08:01,,2007-01-27 00:00,2007-01-27 00:00,,,2006-05-22 08:00,2006-06-09 17:00,,,,,PT_Normal,,,,,wIjqI6HlQbaAKHWK7JqG0A,,,,N,0,0,,,2007-02-01 02:42,2007-02-04 01:05,hbe4678,hbe4678,,,0
1248,12457429,14517,6815972,13330,1,100,N,N,N,CP_Units,TT_Task,DT_FixedDUR2,RV_OK,TK_Complete,EM02NEL120,02N Electrical Conceptual Layouts,,,,0,0,0,0,320,0,0,0,,2005-09-12 00:00,2005-11-04 17:00,2007-05-07 08:00,2007-05-07 08:00,,2007-01-27 00:00,2007-01-27 00:00,,,2005-10-17 08:00,2005-12-09 17:00,,,,,PT_Normal,,,,,FFU11LMUR1CHcYIFNMBSlQ,pzt+9ejV0E6pxLw7luMvPB,,,N,0,0,,,2007-02-01 02:42,2007-02-04 01:05,hbe4678,hbe4678,,,0
1249,12457430,14517,6815972,13330,1,100,N,N,N,CP_Units,TT_Task,DT_FixedDUR2,RV_OK,TK_Complete,EM02PEL120,02P Electrical Conceptual Layouts,,,,0,0,0,0,160,0,0,0,,2005-12-19 08:00,2006-01-03 17:00,2007-05-03 08:01,2007-05-03 08:01,,2007-01-27 00:00,2007-01-27 00:00,,,2005-12-19 08:00,2006-01-17 17:00,,,,,PT_Normal,,,,,osbnm8OzQ2WiZKLZi5KPIA,DOwhQzOXMUWsJVC1BUNpEx,,,N,0,0,,,2007-02-01 02:42,2007-02-04 01:05,hbe4678,hbe4678,,,0
1250,12457431,14517,6815972,13330,1,100,N,N,N,CP_Units,TT_Task,DT_FixedDUR2,RV_OK,TK_Complete,EM02QEL120,02Q Electrical Conceptual Layouts,,,,0,0,0,0,200,0,0,0,,2005-10-10 08:00,2005-11-11 17:00,2007-05-07 08:00,2007-05-07 08:00,,2007-01-27 00:00,2007-01-27 00:00,,,2005-10-10 08:00,2005-11-11 17:00,,,,,PT_Normal,,,,,1epQUArWSPiOeKpj7Yx4HA,PtBie/ZRk0OaHC/63t+Ayx,,,N,0,0,,,2007-02-01 02:42,2007-02-04 01:05,hbe4678,hbe4678,,,0
1251,12457432,14517,6815972,13330,1,100,N,N,N,CP_Units,TT_Task,DT_FixedDUR2,RV_OK,TK_Complete,EM02YEL120,02Y Electrical Conceptual Layouts,,,,0,0,0,0,280,0,0,0,,2005-08-08 00:00,2005-09-30 00:00,2006-12-25 08:00,2006-12-25 08:00,,2007-01-27 00:00,2007-01-27 00:00,,,2005-08-01 08:00,2005-09-16 17:00,,,,,PT_Normal,,,,,3QrNaqcWSXa7MksIfI41Xg,HORJaOMy9UOvZUzz5VkFWx,,,N,0,0,,,2007-02-01 02:42,2007-02-04 01:05,hbe4678,hbe4678,,,0
1252,12457433,14517,6815972,13330,1,100,N,N,N,CP_Units,TT_Task,DT_FixedDUR2,RV_OK,TK_Complete,EM02CEL120,02C Electrical Conceptual Layouts,,,,0,0,0,0,360,0,0,0,,2005-09-26 08:00,2005-10-28 00:00,2007-05-03 08:01,2007-05-03 08:01,,2007-01-27 00:00,2007-01-27 00:00,,,2005-09-26 08:00,2005-11-25 17:00,,,,,PT_Normal,,,,,dvgAGU/VTo66Q8TBspakuw,004nErDi6kijNSj79BnlaB,,,N,0,0,,,2007-02-01 02:42,2007-02-04 01:05,hbe4678,hbe4678,,,0
1253,12457434,14517,6815972,13330,1,100,N,N,N,CP_Units,TT_Task,DT_FixedDUR2,RV_OK,TK_Complete,EM02HEL120,02H Electrical Conceptual Layouts,,,,0,0,0,0,240,0,0,0,,2005-08-11 00:00,2005-09-30 00:00,2007-04-28 08:01,2007-04-28 08:01,,2007-01-27 00:00,2007-01-27 00:00,,,2005-08-29 08:00,2005-10-07 17:00,,,,,PT_Normal,,,,,tzEOyi+JTcWrIfz6oRs9/w,HgFXOuFvDU6FjLiFvoiYKR,,,N,0,0,,,2007-02-01 02:42,2007-02-04 01:05,hbe4678,hbe4678,,,0
1254,12457435,14517,6815972,4047,1,0,N,N,N,CP_Drtn,TT_Task,DT_FixedDUR2,RV_OK,TK_Active,EM020ELEN1,02 LV WIRING DIAGRAMS & CTL SCHEMATICS,,4096,0,184,0,0,0,240,0,0,0,2006-10-20 00:00,2006-10-20 08:00,,2009-01-14 08:00,2009-02-13 17:00,2007-02-28 17:00,2007-01-29 08:00,2007-02-28 17:00,2007-01-29 08:00,2007-02-28 17:00,2006-10-20 08:00,2006-11-30 17:00,,2009-01-14 08:00,2009-02-13 17:00,CS_MSOA,PT_Normal,,,,,faJ4vwhBR8W46HKwXyJATg,,,,N,0,0,,,2007-02-01 02:42,2007-02-01 02:42,hbe4678,hbe4678,2007-01-29 08:00,2007-02-28 17:00,184
1255,12457436,14517,6815972,4047,1,0,N,N,N,CP_Drtn,TT_Task,DT_FixedDUR2,RV_OK,TK_Active,EM020ELEN2,02 MV  WIRING DIAGRAMS & CTL SCHEMATICS,,4096,0,184,0,0,0,240,0,0,0,2006-10-20 00:00,2006-10-20 08:00,,2009-01-14 08:00,2009-02-13 17:00,2007-02-28 17:00,2007-01-29 08:00,2007-02-28 17:00,2007-01-29 08:00,2007-02-28 17:00,2006-10-20 08:00,2006-11-30 17:00,,2009-01-14 08:00,2009-02-13 17:00,CS_MSOA,PT_Normal,,,,,y9ex5VyUQ5SowWyv/HjFSw,,,,N,0,0,,,2007-02-01 02:42,2007-02-01 02:42,hbe4678,hbe4678,2007-01-29 08:00,2007-02-28 17:00,184
1256,12457437,14517,6815972,4047,1,100,N,N,N,CP_Drtn,TT_Task,DT_FixedDUR2,RV_OK,TK_Complete,EM020ELEH2,02 Develop & Issue Earthing / Grounding Dwgs - IFC,,,,0,0,0,0,912,0,0,0,,2005-10-25 00:00,2006-05-26 00:00,2007-05-23 08:00,2007-05-23 08:00,,2007-01-27 00:00,2007-01-27 00:00,,,2006-01-30 08:00,2006-07-06 17:00,,,,,PT_Normal,,,,,wMpzlgvyQwW/YcQABwEwrw,,,,N,0,0,,,2007-02-01 02:42,2007-02-04 01:05,hbe4678,hbe4678,,,0
1257,12457438,14517,6815972,4047,1,100,N,N,N,CP_Drtn,TT_Task,DT_FixedDUR2,RV_OK,TK_Complete,EM020ELEJ2,02 Develop & Issue Lighting Plans - IFC,,,,0,0,0,0,960,0,0,0,,2006-08-16 08:00,2006-10-31 00:00,2008-03-02 08:01,2008-03-02 08:01,,2007-01-27 00:00,2007-01-27 00:00,,,2006-08-16 08:00,2007-01-30 17:00,,,,,PT_Normal,,,,,DNFjjw1LS6eeSXQFlAYHMg,,,,N,0,0,,,2007-02-01 02:42,2007-02-04 01:05,hbe4678,hbe4678,,,0
1258,12457439,14517,6815972,4047,1,100,N,N,N,CP_Drtn,TT_Task,DT_FixedDUR2,RV_OK,TK_Complete,EM020ELEK2,02 Develop & Issue Power Plans - IFC,,,,0,0,0,0,640,0,0,0,,2006-05-19 00:00,2006-12-28 17:00,2007-05-07 08:00,2007-05-07 08:00,,2007-01-27 00:00,2007-01-27 00:00,,,2006-07-13 08:00,2006-11-01 17:00,,,,,PT_Normal,,,,,CUc+Mr9sQfirQj+89JbEmw,,,,N,0,0,,,2007-02-01 02:42,2007-02-04 01:05,hbe4678,hbe4678,,,0
1259,12457440,14517,6815972,4047,1,100,N,N,N,CP_Drtn,TT_Task,DT_FixedDUR2,RV_OK,TK_Complete,EM020ELEL2,02 U/G Electrical Routing Plans - IFC,,,,0,0,0,0,800,0,0,0,,2005-10-17 00:00,2006-06-06 00:00,2006-12-25 08:00,2006-12-25 08:00,,2007-01-27 00:00,2007-01-27 00:00,,,2006-01-30 08:00,2006-06-16 17:00,,,,,PT_Normal,,,,,LTeI0MS7QnOTrT9He4VA2w,,,,N,0,0,,,2007-02-01 02:42,2007-02-04 01:05,hbe4678,hbe4678,,,0
1260,12457441,14517,6815972,4047,1,0,N,N,N,CP_Drtn,TT_Task,DT_FixedDUR2,RV_OK,TK_Active,EM020ELEN3,02 Equipment Interconnection Diagrams,,4088,0,192,0,0,0,960,0,0,0,,2007-01-02 00:00,,2009-01-13 08:00,2009-02-13 17:00,2007-03-01 17:00,2007-01-29 08:00,2007-03-01 17:00,2007-01-29 08:00,2007-03-01 17:00,2006-11-01 08:00,2007-04-17 17:00,,2009-01-13 08:00,2009-02-13 17:00,,PT_Normal,,,,,OKpf7VOIRhefMD++e4IDAA,,,,N,0,0,,,2007-02-01 02:42,2007-02-01 02:42,hbe4678,hbe4678,2007-01-29 08:00,2007-03-01 17:00,192
1261,12457442,14517,6815972,4047,1,100,N,N,N,CP_Drtn,TT_Task,DT_FixedDUR2,RV_OK,TK_Complete,EM20ELEK2,02 Develop & Issue Cable Ladder Plans - IFC,,,,0,0,0,0,640,0,0,0,,2006-04-03 00:00,2006-08-18 00:00,2007-05-07 08:00,2007-05-07 08:00,,2007-01-27 00:00,2007-01-27 00:00,,,2006-07-13 08:00,2006-11-01 17:00,,,,,PT_Normal,,,,,RhDFxJXWSQGYl8qWIaWhLA,zstv98V04Uujw2gnUFb9bQ,,,N,0,0,,,2007-02-01 02:42,2007-02-04 01:05,hbe4678,hbe4678,,,0
1262,12457443,14517,6815972,13330,1,100,N,N,N,CP_Units,TT_Task,DT_FixedDUR2,RV_OK,TK_Complete,EM02LEL120,02L Electrical Conceptual Layouts,,,,0,0,0,0,240,0,0,0,,2005-08-23 00:00,2005-11-03 17:00,2007-01-09 08:01,2007-01-09 08:01,,2007-01-27 00:00,2007-01-27 00:00,,,2005-09-23 08:00,2005-11-03 17:00,,,,,PT_Normal,,,,,+wv04o0ITGOupdAGt7gieA,,,,N,0,0,,,2007-02-01 02:42,2007-02-04 01:05,hbe4678,hbe4678,,,0
1263,12457444,14517,6815972,13330,1,100,N,N,N,CP_Units,TT_Task,DT_FixedDUR2,RV_OK,TK_Complete,EM02AEL120,02A Electrical Conceptual Layouts,,,,0,0,0,0,320,0,0,0,,2005-07-27 08:00,2005-09-30 00:00,2007-05-07 08:00,2007-05-07 08:00,,2007-01-27 00:00,2007-01-27 00:00,,,2005-07-27 08:00,2005-09-20 17:00,,,,,PT_Normal,,,,,aMXZiwFsQIG6PHPEKm5htQ,004nErDi6kijNSj79BnlaB,,,N,0,0,,,2007-02-01 02:42,2007-02-04 01:05,hbe4678,hbe4678,,,0
1264,12457445,14517,6815972,13330,1,100,N,N,N,CP_Units,TT_Task,DT_FixedDUR2,RV_OK,TK_Complete,EM02BEL120,02B Electrical Conceptual Layouts,,,,0,0,0,0,320,0,0,0,,2005-07-27 08:00,2005-10-21 17:00,2007-04-01 08:01,2007-04-01 08:01,,2007-01-27 00:00,2007-01-27 00:00,,,2005-07-27 08:00,2005-09-20 17:00,,,,,PT_Normal,,,,,J7K8DHqmQ0qL/N+F/+Fxnw,/BoZzOKt/kKHV9I0sofpKh,,,N,0,0,,,2007-02-01 02:42,2007-02-04 01:05,hbe4678,hbe4678,,,0
1265,12457446,14517,6815972,13330,1,100,N,N,N,CP_Units,TT_Task,DT_FixedDUR2,RV_OK,TK_Complete,EM02DEL120,02D Electrical Conceptual Layouts,,,,0,0,0,0,160,0,0,0,,2005-10-31 00:00,2005-12-16 00:00,2007-04-24 08:01,2007-04-24 08:01,,2007-01-27 00:00,2007-01-27 00:00,,,2005-11-11 08:00,2005-12-08 17:00,,,,,PT_Normal,,,,,YL0oXNecTCOwbX7jynhEtw,/a9qOpHqV0md0ZAKoBBqHR,,,N,0,0,,,2007-02-01 02:42,2007-02-04 01:05,hbe4678,hbe4678,,,0
1266,12457447,14517,6815972,13330,1,100,N,N,N,CP_Units,TT_Task,DT_FixedDUR2,RV_OK,TK_Complete,EM02EEL120,02E Electrical Conceptual Layouts,,,,0,0,0,0,320,0,0,0,,2005-08-01 00:00,2005-09-30 00:00,2007-04-15 08:01,2007-04-15 08:01,,2007-01-27 00:00,2007-01-27 00:00,,,2005-09-26 08:00,2005-11-18 17:00,,,,,PT_Normal,,,,,ofu9VYDsR5iM/eKVewiL4w,X4dO68GdyEyZ9YSSmSSJLB,,,N,0,0,,,2007-02-01 02:42,2007-02-04 01:05,hbe4678,hbe4678,,,0
1267,12457448,14517,6815972,13330,1,100,N,N,N,CP_Units,TT_Task,DT_FixedDUR2,RV_OK,TK_Complete,EM02FEL120,02F Electrical Conceptual Layouts,,,,0,0,0,0,168,0,0,0,,2005-10-21 08:00,2005-10-28 00:00,2007-05-05 08:01,2007-05-05 08:01,,2007-01-27 00:00,2007-01-27 00:00,,,2005-10-21 08:00,2005-11-18 17:00,,,,,PT_Normal,,,,,ntL0ODVES4yQYHPv7yKFJw,DiUvAdSYCU2/PCxgq7C2dx,,,N,0,0,,,2007-02-01 02:42,2007-02-04 01:05,hbe4678,hbe4678,,,0
1268,12457449,14517,6815972,13330,1,100,N,N,N,CP_Units,TT_Task,DT_FixedDUR2,RV_OK,TK_Complete,EM02GEL120,02G Electrical Conceptual Layouts,,,,0,0,0,0,240,0,0,0,,2005-09-05 00:00,2005-12-07 00:00,2007-05-07 08:00,2007-05-07 08:00,,2007-01-27 00:00,2007-01-27 00:00,,,2005-10-10 08:00,2005-11-18 17:00,,,,,PT_Normal,,,,,y6chj8VETFi+pdEIN4hNeQ,mJKGngQ+7UqnX3jIR+BXMR,,,N,0,0,,,2007-02-01 02:42,2007-02-04 01:05,hbe4678,hbe4678,,,0
1269,12457450,14517,6815972,13330,1,100,N,N,N,CP_Units,TT_Task,DT_FixedDUR2,RV_OK,TK_Complete,EM02JEL120,02J Electrical Conceptual Layouts,,,,0,0,0,0,320,0,0,0,,2005-09-12 00:00,2005-12-01 17:00,2007-05-07 08:00,2007-05-07 08:00,,2007-01-27 00:00,2007-01-27 00:00,,,2005-10-17 08:00,2005-12-09 17:00,,,,,PT_Normal,,,,,+SWg5Xu1SLS4Vm3dC1x98A,s8G69NwGREmyxb+4i0qgoR,,,N,0,0,,,2007-02-01 02:42,2007-02-04 01:05,hbe4678,hbe4678,,,0
1270,12457451,14517,6815972,13330,1,100,N,N,N,CP_Units,TT_Task,DT_FixedDUR2,RV_OK,TK_Complete,EM02KEL120,02K Electrical Conceptual Layouts,,,,0,0,0,0,320,0,0,0,,2005-09-05 00:00,2005-10-28 17:00,2007-05-20 08:01,2007-05-20 08:01,,2007-01-27 00:00,2007-01-27 00:00,,,2005-10-10 08:00,2005-12-02 17:00,,,,,PT_Normal,,,,,2vKHROqUQA2W4HsPKWgCcw,AthG2qRivkGka2Bo/zN24x,,,N,0,0,,,2007-02-01 02:42,2007-02-04 01:05,hbe4678,hbe4678,,,0
1271,12457452,14517,6815972,13330,1,100,N,N,N,CP_Units,TT_Task,DT_FixedDUR2,RV_OK,TK_Complete,EM02MEL120,02M Electrical Conceptual Layouts,,,,0,0,0,0,320,0,0,0,,2005-09-12 00:00,2005-11-18 17:00,2007-05-07 08:00,2007-05-07 08:00,,2007-01-27 00:00,2007-01-27 00:00,,,2005-10-17 08:00,2005-12-09 17:00,,,,,PT_Normal,,,,,AGrgsUYNTf6hbbk01INiHw,yoiBYp398EO0Vt4eD7p2rh,,,N,0,0,,,2007-02-01 02:42,2007-02-04 01:05,hbe4678,hbe4678,,,0
1272,12457453,14517,6815979,13330,1,100,N,N,N,CP_Units,TT_Task,DT_FixedDUR2,RV_OK,TK_Complete,EM02HMD228,"02H  Clips Release IFC (MD301, MD405, MD501)",,,,0,0,0,0,240,0,0,0,,2006-03-27 08:00,2006-04-17 17:00,2007-07-02 08:01,2007-07-02 08:01,,2007-01-27 00:00,2007-01-27 00:00,,,2006-03-27 08:00,2006-05-05 17:00,,,,,PT_Normal,,,,,GUkH4e1jQ2q7NysGe9r2rg,jOtf606VOUW3pXr3LhKbHB,,,N,0,0,,,2007-02-01 02:42,2007-02-04 01:05,hbe4678,hbe4678,,,0
1273,12457454,14517,6815979,13330,1,100,N,N,N,CP_Units,TT_Task,DT_FixedDUR2,RV_OK,TK_Complete,EM02HMD229,"02H Vessel Steel Release IFC (MD301, MD405, MD501)",,,,0,0,0,0,160,0,0,0,,2006-04-12 00:00,2006-05-29 00:00,2007-07-02 08:01,2007-07-02 08:01,,2007-01-27 00:00,2007-01-27 00:00,,,2006-05-01 08:00,2006-05-26 17:00,,,,,PT_Normal,,,,,zLHrs+zXQdOjFIk4Ofchow,IlBIM0wMTU2BUiDszDn4mR,,,N,0,0,,,2007-02-01 02:42,2007-02-04 01:05,hbe4678,hbe4678,,,0
1274,12457455,14517,6815979,13330,1,100,N,N,N,CP_Units,TT_Task,DT_FixedDUR2,RV_OK,TK_Complete,EM02JMD228,"02J  Clips Release IFC (MD302,MD304)",,,,0,0,0,0,240,0,0,0,,2006-03-27 08:00,2006-04-17 17:00,2007-07-31 08:01,2007-07-31 08:01,,2007-01-27 00:00,2007-01-27 00:00,,,2006-03-27 08:00,2006-05-05 17:00,,,,,PT_Normal,,,,,7h2R7fpNTHSd9uL35pJJYw,JZEkh9lXn0eP8RIq5VjEkh,,,N,0,0,,,2007-02-01 02:42,2007-02-04 01:05,hbe4678,hbe4678,,,0
1275,12457456,14517,6815979,13330,1,100,N,N,N,CP_Units,TT_Task,DT_FixedDUR2,RV_OK,TK_Complete,EM02JMD229,"02J Vessel Steel Release IFC (MD302,MD304)",,,,0,0,0,0,160,0,0,0,,2006-04-12 00:00,2006-05-29 00:00,2007-07-31 08:01,2007-07-31 08:01,,2007-01-27 00:00,2007-01-27 00:00,,,2006-05-01 08:00,2006-05-26 17:00,,,,,PT_Normal,,,,,BcJG8oODSWaNj1dKZb9tSQ,5mhcj2Wmb0a8APFA3+kYmR,,,N,0,0,,,2007-02-01 02:42,2007-02-04 01:05,hbe4678,hbe4678,,,0
1276,12457457,14517,6815979,13330,1,100,N,N,N,CP_Units,TT_Task,DT_FixedDUR2,RV_OK,TK_Complete,EM02KMD228,"02K  Clips Release IFC (MD202, MD405)",,,,0,0,0,0,240,0,0,0,,2006-01-19 08:00,2006-04-21 17:00,2007-06-29 17:00,2007-06-29 17:00,,2007-01-27 00:00,2007-01-27 00:00,,,2006-01-19 08:00,2006-03-01 17:00,,,,,PT_Normal,,,,,UCt7GfdXRBKMJfJOLn9VqQ,+G7cGrBlzEuPcP2lEcpIFB,,,N,0,0,,,2007-02-01 02:42,2007-02-04 01:05,hbe4678,hbe4678,,,0
1277,12457458,14517,6815979,13330,1,100,N,N,N,CP_Units,TT_Task,DT_FixedDUR2,RV_OK,TK_Complete,EM02KMD229,"02K Vessel Steel Release IFC (MD202, MD405)",,,,0,0,0,0,160,0,0,0,,2006-04-12 08:00,2006-05-29 00:00,2007-06-29 17:00,2007-06-29 17:00,,2007-01-27 00:00,2007-01-27 00:00,,,2006-04-12 08:00,2006-05-09 17:00,,,,,PT_Normal,,,,,F/DoVO3tTTWtTeOMVLYfZA,3RkQghPovUqHntUzhpehEx,,,N,0,0,,,2007-02-01 02:42,2007-02-04 01:05,hbe4678,hbe4678,,,0
1278,12457459,14517,6815979,13330,1,100,N,N,N,CP_Units,TT_Task,DT_FixedDUR2,RV_OK,TK_Complete,EM02LMD228,"02L  Clips Release IFC (MD201, MD402, MD404, MD406)",,,,0,0,0,0,240,0,0,0,,2006-03-27 08:00,2006-04-26 17:00,2007-05-15 08:01,2007-05-15 08:01,,2007-01-27 00:00,2007-01-27 00:00,,,2006-03-27 08:00,2006-05-05 17:00,,,,,PT_Normal,,,,,fJ6SOb7mR8mGbFlucDJArg,njFWfvhbBUuwWqOK/hCSlh,,,N,0,0,,,2007-02-01 02:42,2007-02-04 01:05,hbe4678,hbe4678,,,0
1279,12457460,14517,6815979,13330,1,100,N,N,N,CP_Units,TT_Task,DT_FixedDUR2,RV_OK,TK_Complete,EM02LMD229,"02L Vessel Steel Release IFC (MD201, MD402, MD404, MD406)",,,,0,0,0,0,160,0,0,0,,2006-04-12 00:00,2006-06-20 17:00,2007-05-15 08:01,2007-05-15 08:01,,2007-01-27 00:00,2007-01-27 00:00,,,2006-05-01 08:00,2006-05-26 17:00,,,,,PT_Normal,,,,,0XOUyuqMS5iPKvpw7Of/bQ,o1ZK5kWMMUeN21HM//2cyR,,,N,0,0,,,2007-02-01 02:42,2007-02-04 01:05,hbe4678,hbe4678,,,0
1280,12457461,14517,6815979,13330,1,100,N,N,N,CP_Units,TT_Task,DT_FixedDUR2,RV_OK,TK_Complete,EM02AMD228,"02A  Clips Release IFC (MD202, 103/4/5-E)",,,,0,0,0,0,240,0,0,0,,2006-03-27 08:00,2006-04-17 17:00,2007-06-10 08:01,2007-06-10 08:01,,2007-01-27 00:00,2007-01-27 00:00,,,2006-03-27 08:00,2006-05-05 17:00,,,,,PT_Normal,,,,,lVaeElaKQzOoLyoJoS4oZQ,TFHIvEG3/ke4iiWG87TPPh,,,N,0,0,,,2007-02-01 02:42,2007-02-04 01:05,hbe4678,hbe4678,,,0
1281,12457462,14517,6815979,13330,1,100,N,N,N,CP_Units,TT_Task,DT_FixedDUR2,RV_OK,TK_Complete,EM02QMD229,02Q Vessel Steel Release IFC (MD401),,,,0,0,0,0,160,0,0,0,,2006-04-12 00:00,2006-05-29 00:00,2007-05-26 08:01,2007-05-26 08:01,,2007-01-27 00:00,2007-01-27 00:00,,,2006-05-01 08:00,2006-05-26 17:00,,,,,PT_Normal,,,,,W8uXxVkhTOW49acD1gFloA,LXn26nxs3U2E+f7JSY7eiB,,,N,0,0,,,2007-02-01 02:42,2007-02-04 01:05,hbe4678,hbe4678,,,0
1282,12457463,14517,6815979,13330,1,100,N,N,N,CP_Units,TT_Task,DT_FixedDUR2,RV_OK,TK_Complete,EM02QMD228,02Q Clips  Release IFC (MD401),,,,0,0,0,0,240,0,0,0,,2006-03-27 08:00,2006-04-17 17:00,2007-05-26 08:01,2007-05-26 08:01,,2007-01-27 00:00,2007-01-27 00:00,,,2006-03-27 08:00,2006-05-05 17:00,,,,,PT_Normal,,,,,MtJEKN4/TsW0lumxIexbFw,54Ftl2wA50mz8xfJyF7wSx,,,N,0,0,,,2007-02-01 02:42,2007-02-04 01:05,hbe4678,hbe4678,,,0
1283,12457464,14517,6815979,13330,1,100,N,N,N,CP_Units,TT_Task,DT_FixedDUR2,RV_OK,TK_Complete,EM03BMD228,03B Clips  Release IFC,,,,0,0,0,0,240,0,0,0,,2006-07-03 00:00,2006-08-11 00:00,2007-08-12 08:01,2007-08-12 08:01,,2007-01-27 00:00,2007-01-27 00:00,,,2006-07-24 08:00,2006-09-01 17:00,,,,,PT_Normal,,,,,PGXGLQQQR+eyrsiO7n0pTQ,16wf9XLM7EurCU019WXwTx,,,N,0,0,,,2007-02-01 02:42,2007-02-04 01:05,hbe4678,hbe4678,,,0
1284,12457465,14517,6815979,13330,1,100,N,N,N,CP_Units,TT_Task,DT_FixedDUR2,RV_OK,TK_Complete,EM03CMD228,"03C Clips  Release IFC (MD411 2203-F, 2204-F)",,,,0,0,0,0,240,0,0,0,,2006-04-03 00:00,2006-04-26 00:00,2007-05-08 08:00,2007-05-08 08:00,,2007-01-27 00:00,2007-01-27 00:00,,,2006-05-01 08:00,2006-06-09 17:00,,,,,PT_Normal,,,,,Zikn2UCsRJ+WSeAQIVXY5w,JP56mDumVE+G4PkKSjQNnx,,,N,0,0,,,2007-02-01 02:42,2007-02-04 01:05,hbe4678,hbe4678,,,0
1285,12457466,14517,6815979,13330,1,100,N,N,N,CP_Units,TT_Task,DT_FixedDUR2,RV_OK,TK_Complete,EM03FMD228,"03F Clips  Release IFC (MD411, 2006-F)",,,,0,0,0,0,240,0,0,0,,2006-04-12 00:00,2006-04-28 00:00,2007-08-07 08:01,2007-08-07 08:01,,2007-01-27 00:00,2007-01-27 00:00,,,2006-06-06 08:00,2006-07-17 17:00,,,,,PT_Normal,,,,,HDxXL2RUSLiBinq3v3FX1g,a+htVE6cuEivIOJ+05OScR,,,N,0,0,,,2007-02-01 02:42,2007-02-04 01:05,hbe4678,hbe4678,,,0
1286,12457467,14517,6815979,13330,1,100,N,N,N,CP_Units,TT_Task,DT_FixedDUR2,RV_OK,TK_Complete,EM05AMD228,05A Clips  Release IFC,,,,0,0,0,0,240,0,0,0,,2006-07-03 00:00,2006-07-28 17:00,2007-06-08 17:00,2007-06-08 17:00,,2007-01-27 00:00,2007-01-27 00:00,,,2006-08-01 08:01,2006-09-12 08:01,,,,,PT_Normal,,,,,Z+PLy7RLQ06joQ2AhuWezg,6fOtnvWeJkScHtTJpHhu1R,,,N,0,0,,,2007-02-01 02:42,2007-02-04 01:05,hbe4678,hbe4678,,,0
1287,12457468,14517,6815979,13330,1,100,N,N,N,CP_Units,TT_Task,DT_FixedDUR2,RV_OK,TK_Complete,EM02MMD229,"02M Vessel Steel Release IFC (MD303, MD402)",,,,0,0,0,0,160,0,0,0,,2006-04-12 00:00,2006-05-29 00:00,2007-08-01 08:01,2007-08-01 08:01,,2007-01-27 00:00,2007-01-27 00:00,,,2006-05-01 08:00,2006-05-26 17:00,,,,,PT_Normal,,,,,6knGpQ3XQDq//1F9ZTJRqw,ow7jKjwbb0eQkiynjYKgXR,,,N,0,0,,,2007-02-01 02:42,2007-02-04 01:05,hbe4678,hbe4678,,,0
1288,12457469,14517,6815979,13330,1,100,N,N,N,CP_Units,TT_Task,DT_FixedDUR2,RV_OK,TK_Complete,EM02MMD228,"02M Clips  Release IFC (MD303, MD402)",,,,0,0,0,0,240,0,0,0,,2006-03-27 08:00,2006-04-17 17:00,2007-08-01 08:01,2007-08-01 08:01,,2007-01-27 00:00,2007-01-27 00:00,,,2006-03-27 08:00,2006-05-05 17:00,,,,,PT_Normal,,,,,G7tEZYV2TT+4Fc9CTxOsjg,K7H3aQSMNEeJLyuvD2h4IB,,,N,0,0,,,2007-02-01 02:42,2007-02-04 01:05,hbe4678,hbe4678,,,0
1289,12457470,14517,6815979,13330,1,100,N,N,N,CP_Units,TT_Task,DT_FixedDUR2,RV_OK,TK_Complete,EM02AMD229,02A Vessel Steel  Release IFC,,,,0,0,0,0,160,0,0,0,,2006-04-12 08:00,2006-05-29 00:00,2007-06-10 08:01,2007-06-10 08:01,,2007-01-27 00:00,2007-01-27 00:00,,,2006-04-12 08:00,2006-05-09 17:00,,,,,PT_Normal,,,,,6U9m2jfpRuyZrKGbhVRA1w,yQTpNkQYq0W4pRyuaog4eR,,,N,0,0,,,2007-02-01 02:42,2007-02-04 01:05,hbe4678,hbe4678,,,0
1290,12457471,14517,6815979,13330,1,100,N,N,N,CP_Units,TT_Task,DT_FixedDUR2,RV_OK,TK_Complete,EM02DMD228,"02D  Clips Release IFC (MD403, MD404, 106/7/9-F)",,,,0,0,0,0,240,0,0,0,,2006-04-03 08:00,2006-04-17 17:00,2007-04-24 08:01,2007-04-24 08:01,,2007-01-27 00:00,2007-01-27 00:00,,,2006-04-03 08:00,2006-05-12 17:00,,,,,PT_Normal,,,,,688/DUKRQuuZsTwxxtWs+w,VFYd2r4OO02Z7G/NSWxKXR,,,N,0,0,,,2007-02-01 02:42,2007-02-04 01:05,hbe4678,hbe4678,,,0
1291,12457472,14517,6815979,13330,1,100,N,N,N,CP_Units,TT_Task,DT_FixedDUR2,RV_OK,TK_Complete,EM02DMD229,"02D Vessel Steel  Release IFC (MD403, MD404, 106/7/9-F)",,,,0,0,0,0,160,0,0,0,,2006-04-12 00:00,2006-05-29 00:00,2007-04-24 08:01,2007-04-24 08:01,,2007-01-27 00:00,2007-01-27 00:00,,,2006-05-01 08:00,2006-05-26 17:00,,,,,PT_Normal,,,,,WX+lNxQuS++Cf/zENzSXUA,5OWTGT8dfk+iZmEq0vqIix,,,N,0,0,,,2007-02-01 02:42,2007-02-04 01:05,hbe4678,hbe4678,,,0
1292,12457473,14517,6815979,13330,1,100,N,N,N,CP_Units,TT_Task,DT_FixedDUR2,RV_OK,TK_Complete,EM02EMD228,"02E  Clips Release IFC (MD304, MD402, MD405)",,,,0,0,0,0,240,0,0,0,,2006-01-04 08:00,2006-04-21 17:00,2007-04-15 08:01,2007-04-15 08:01,,2007-01-27 00:00,2007-01-27 00:00,,,2006-01-04 08:00,2006-02-14 17:00,,,,,PT_Normal,,,,,Kyo/mDsnSnSZ21oL9dmFEA,JjpvdrieN0qUsT08ppROux,,,N,0,0,,,2007-02-01 02:42,2007-02-04 01:05,hbe4678,hbe4678,,,0
1293,12457474,14517,6815979,13330,1,100,N,N,N,CP_Units,TT_Task,DT_FixedDUR2,RV_OK,TK_Complete,EM02EMD229,02E Vessel Steel  Release IFC,,,,0,0,0,0,160,0,0,0,,2006-04-12 00:00,2006-05-29 00:00,2007-04-15 08:01,2007-04-15 08:01,,2007-01-27 00:00,2007-01-27 00:00,,,2006-05-01 08:00,2006-05-26 17:00,,,,,PT_Normal,,,,,Ndww+2mARsWMoqM192tV2Q,p3xfWgvOBE+yCuT7QKnqkR,,,N,0,0,,,2007-02-01 02:42,2007-02-04 01:05,hbe4678,hbe4678,,,0
1294,12457475,14517,6815981,13331,1,100,N,N,N,CP_Units,TT_Task,DT_FixedDUR2,RV_OK,TK_Complete,EM02GPI200,02G Equipment Location Plans,,,,0,0,0,0,368,0,0,0,,2006-02-27 08:00,2006-06-28 00:00,2007-05-07 08:00,2007-05-07 08:00,,2007-01-27 00:00,2007-01-27 00:00,,,2006-02-27 08:00,2006-05-05 17:00,,,,,PT_Normal,,,,,Kw8bv9yYRWuZ3NLz0eJX+g,JHQfukoNNEmZ4NSyZaSUXw,,,N,0,0,,,2007-02-01 02:42,2007-02-04 01:05,hbe4678,hbe4678,,,0
1295,12457476,14517,6815981,13331,1,100,N,N,N,CP_Units,TT_Task,DT_FixedDUR2,RV_OK,TK_Complete,EM02HPI200,02H Equipment Location Plans,,,,0,0,0,0,120,0,0,0,,2006-02-27 08:00,2006-03-20 17:00,2007-05-07 08:00,2007-05-07 08:00,,2007-01-27 00:00,2007-01-27 00:00,,,2006-02-27 08:00,2006-03-17 17:00,,,,,PT_Normal,,,,,NqGfcnMDQLG+ZJbzNTE+vw,JHQfukoNNEmZ4NSyZaSUXw,,,N,0,0,,,2007-02-01 02:42,2007-02-04 01:05,hbe4678,hbe4678,,,0
1296,12457477,14517,6815981,13331,1,100,N,N,N,CP_Units,TT_Task,DT_FixedDUR2,RV_OK,TK_Complete,EM02JPI200,02J Equipment Location Plans,,,,0,0,0,0,120,0,0,0,,2006-02-27 08:00,2006-03-20 17:00,2007-05-07 08:00,2007-05-07 08:00,,2007-01-27 00:00,2007-01-27 00:00,,,2006-02-27 08:00,2006-03-17 17:00,,,,,PT_Normal,,,,,dp/5DTswTXm/uTyVAkdyBQ,BNmVlB/pfUuNdz+E7Pgexg,,,N,0,0,,,2007-02-01 02:42,2007-02-04 01:05,hbe4678,hbe4678,,,0
1297,12457478,14517,6815981,13331,1,100,N,N,N,CP_Units,TT_Task,DT_FixedDUR2,RV_OK,TK_Complete,EM02KPI200,02K Equipment Location Plans,,,,0,0,0,0,120,0,0,0,,2006-02-27 08:00,2006-03-17 00:00,2007-05-07 08:00,2007-05-07 08:00,,2007-01-27 00:00,2007-01-27 00:00,,,2006-02-27 08:00,2006-03-17 17:00,,,,,PT_Normal,,,,,ZFHrFwKmRCOtNxdiCKIwJQ,Rk5UFPwnG0uK5OyAv1IQhQ,,,N,0,0,,,2007-02-01 02:42,2007-02-04 01:05,hbe4678,hbe4678,,,0
1298,12457479,14517,6815981,13331,1,100,N,N,N,CP_Units,TT_Task,DT_FixedDUR2,RV_OK,TK_Complete,EM02LPI200,02L Equipment Location Plans,,,,0,0,0,0,152,0,0,0,,2006-02-27 08:00,2006-03-29 00:00,2007-01-09 08:01,2007-01-09 08:01,,2007-01-27 00:00,2007-01-27 00:00,,,2006-02-27 08:00,2006-03-24 17:00,,,,,PT_Normal,,,,,t9eX8egJSQmRX2tXDId44Q,Rk5UFPwnG0uK5OyAv1IQhQ,,,N,0,0,,,2007-02-01 02:42,2007-02-04 01:05,hbe4678,hbe4678,,,0
1299,12457480,14517,6815981,13331,1,100,N,N,N,CP_Units,TT_Task,DT_FixedDUR2,RV_OK,TK_Complete,EM02MPI200,02M Equipment Location Plans,,,,0,0,0,0,152,0,0,0,,2006-02-27 08:00,2006-03-27 17:00,2007-05-07 08:00,2007-05-07 08:00,,2007-01-27 00:00,2007-01-27 00:00,,,2006-02-27 08:00,2006-03-24 17:00,,,,,PT_Normal,,,,,LtJxwtXoSUmBZHp+94t9bA,Rk5UFPwnG0uK5OyAv1IQhQ,,,N,0,0,,,2007-02-01 02:42,2007-02-04 01:05,hbe4678,hbe4678,,,0
1300,12457481,14517,6815981,13331,1,100,N,N,N,CP_Units,TT_Task,DT_FixedDUR2,RV_OK,TK_Complete,EM02NPI200,02N Equipment Location Plans,,,,0,0,0,0,120,0,0,0,,2006-02-27 08:00,2006-03-20 17:00,2007-05-07 08:00,2007-05-07 08:00,,2007-01-27 00:00,2007-01-27 00:00,,,2006-02-27 08:00,2006-03-17 17:00,,,,,PT_Normal,,,,,NqXyJDHBQF6tDz0VyokSkg,0V5IyfVgK0OweK+OkB4tTA,,,N,0,0,,,2007-02-01 02:42,2007-02-04 01:05,hbe4678,hbe4678,,,0
1301,12457482,14517,6815981,13331,1,100,N,N,N,CP_Units,TT_Task,DT_FixedDUR2,RV_OK,TK_Complete,EM02PPI200,02P Equipment Location Plans,,,,0,0,0,0,80,0,0,0,,2006-02-27 08:00,2006-03-20 17:00,2007-05-07 08:00,2007-05-07 08:00,,2007-01-27 00:00,2007-01-27 00:00,,,2006-02-27 08:00,2006-03-10 17:00,,,,,PT_Normal,,,,,wcouezf8Q0+e7JTs9UWDng,n8s+mN3BykW9yk6zmrnlsA,,,N,0,0,,,2007-02-01 02:42,2007-02-04 01:05,hbe4678,hbe4678,,,0
1302,12457483,14517,6815981,13331,1,100,N,N,N,CP_Units,TT_Task,DT_FixedDUR2,RV_OK,TK_Complete,EM02DPI140,02D Model Review Comment Resolution,,,,0,0,0,0,24,0,0,0,,2006-01-16 00:00,2006-01-17 00:00,2007-04-24 08:01,2007-04-24 08:01,,2007-01-27 00:00,2007-01-27 00:00,,,2006-01-30 08:00,2006-02-01 17:00,,,,,PT_Normal,,,,,FzpBaz7YQG2N8OcQ7ApijQ,7983vvBOM0ij0+M8m+BgHx,,,N,0,0,,,2007-02-01 02:42,2007-02-04 01:05,hbe4678,hbe4678,,,0
1303,12457484,14517,6815981,13331,1,100,N,N,N,CP_Units,TT_Task,DT_FixedDUR2,RV_OK,TK_Complete,EM02DPI141,02D Detail OP's & Services Model Review Mtg,,,,0,0,0,0,16,0,0,0,,2006-05-25 00:00,2006-05-25 00:00,2007-04-24 08:01,2007-04-24 08:01,,2007-01-27 00:00,2007-01-27 00:00,,,2006-05-26 08:00,2006-05-29 17:00,,,,,PT_Normal,,,,,il8HSF2WS9uraovLP9zdaw,7983vvBOM0ij0+M8m+BgHx,,,N,0,0,,,2007-02-01 02:42,2007-02-04 01:05,hbe4678,hbe4678,,,0
1304,12457485,14517,6815981,13331,1,100,N,N,N,CP_Units,TT_Task,DT_FixedDUR2,RV_OK,TK_Complete,EM02DPI142,02D OP's & Serv. Model Review Comment Resolution,,,,0,0,0,0,16,0,0,0,,2006-05-26 00:00,2006-06-08 00:00,2007-04-24 08:01,2007-04-24 08:01,,2007-01-27 00:00,2007-01-27 00:00,,,2006-05-30 08:00,2006-05-31 17:00,,,,,PT_Normal,,,,,onpwGfJCT/mqTaFyEWD09Q,7983vvBOM0ij0+M8m+BgHx,,,N,0,0,,,2007-02-01 02:42,2007-02-04 01:05,hbe4678,hbe4678,,,0
1305,12457486,14517,6815981,13331,1,100,N,N,N,CP_Units,TT_Task,DT_FixedDUR2,RV_OK,TK_Complete,EM02CPI141,02C Detail OP's & Services Model Review Mtg,,,,0,0,0,0,40,0,0,0,,2006-07-03 08:00,2006-07-10 00:00,2007-05-03 08:01,2007-05-03 08:01,,2007-01-27 00:00,2007-01-27 00:00,,,2006-07-03 08:00,2006-07-07 17:00,,,,,PT_Normal,,,,,KsnxdQOyTjW6kpXCf2fH5A,N4dm1nWGTEqjQ24QNaxUrQ,,,N,0,0,,,2007-02-01 02:42,2007-02-04 01:05,hbe4678,hbe4678,,,0
1306,12457487,14517,6815981,13331,1,100,N,N,N,CP_Units,TT_Task,DT_FixedDUR2,RV_OK,TK_Complete,EM02CPI143,02C OP's & Serv. Model Review Comments Resolution,,,,0,0,0,0,40,0,0,0,,2006-07-11 00:00,2006-08-02 17:00,2007-05-03 08:01,2007-05-03 08:01,,2007-01-27 00:00,2007-01-27 00:00,,,2006-07-10 08:00,2006-07-14 17:00,,,,,PT_Normal,,,,,f9DGlLwPQ5mdehsdl/Z8KA,vUz2HJYZ2kKyEzgH/KZ5jQ,,,N,0,0,,,2007-02-01 02:42,2007-02-04 01:05,hbe4678,hbe4678,,,0
1307,12457488,14517,6815981,13331,1,100,N,N,N,CP_Units,TT_Task,DT_FixedDUR2,RV_OK,TK_Complete,EM02GPI141,02G Detail OP's & Services Model Review Mtg,,,,0,0,0,0,40,0,0,0,,2006-09-11 08:00,2006-09-15 17:00,2007-06-07 08:01,2007-06-07 08:01,,2007-01-27 00:00,2007-01-27 00:00,,,2006-09-11 08:00,2006-09-15 17:00,,,,,PT_Normal,,,,,KuvhXhAySKeM1fXFksCDtg,1dRu1awHBUOU6+jcU2Bq9g,,,N,0,0,,,2007-02-01 02:42,2007-02-04 01:05,hbe4678,hbe4678,,,0
1308,12457489,14517,6815981,13331,1,100,N,N,N,CP_Units,TT_Task,DT_FixedDUR2,RV_OK,TK_Active,EM02GPI143,02G OP's & Serv. Model Review Comments Resolution,,704.016666666667,0,40,0,0,0,40,0,0,0,,2006-10-02 08:00,,2007-05-31 08:01,2007-06-07 08:01,2006-11-10 17:00,2007-01-29 08:00,2007-02-02 17:00,2007-01-29 08:00,2007-02-02 17:00,2006-10-02 08:00,2006-10-06 17:00,,2007-05-31 08:01,2007-06-07 08:01,,PT_Normal,,,,,YmDmRZSzQOWYeRlGv6Bt2g,eEM5JWHjLkeXorpmek6o3g,,,N,0,0,,,2007-02-01 02:42,2007-02-04 01:05,hbe4678,hbe4678,2007-01-29 08:00,2007-02-02 17:00,40
1309,12457490,14517,6815981,13331,1,100,N,N,N,CP_Units,TT_Task,DT_FixedDUR2,RV_OK,TK_Complete,EM02HPI141,02H Detail OP's & Services Model Review Mtg,,,,0,0,0,0,40,0,0,0,,2006-07-11 08:00,2006-07-13 00:00,2007-07-02 08:01,2007-07-02 08:01,,2007-01-27 00:00,2007-01-27 00:00,,,2006-07-11 08:00,2006-07-17 17:00,,,,,PT_Normal,,,,,1Y4scDWAQOuhcAllXg/nDg,1dRu1awHBUOU6+jcU2Bq9g,,,N,0,0,,,2007-02-01 02:42,2007-02-04 01:05,hbe4678,hbe4678,,,0
1310,12457491,14517,6815981,13331,1,100,N,N,N,CP_Units,TT_Task,DT_FixedDUR2,RV_OK,TK_Complete,EM02HPI143,02H OP's & Serv. Model Review Comments Resolution,,,,0,0,0,0,40,0,0,0,,2006-07-14 00:00,2006-08-21 17:00,2007-07-02 08:01,2007-07-02 08:01,,2007-01-27 00:00,2007-01-27 00:00,,,2006-07-20 08:00,2006-07-26 17:00,,,,,PT_Normal,,,,,bbYgDp0JTeifQzPU7v/4Pw,eEM5JWHjLkeXorpmek6o3g,,,N,0,0,,,2007-02-01 02:42,2007-02-04 01:05,hbe4678,hbe4678,,,0
1311,12457492,14517,6815981,13331,1,100,N,N,N,CP_Units,TT_Task,DT_FixedDUR2,RV_OK,TK_Complete,EM02JPI141,02J Detail OP's & Services Model Review Mtg,,,,0,0,0,0,40,0,0,0,,2006-06-26 08:00,2006-06-27 17:00,2007-07-31 08:01,2007-07-31 08:01,,2007-01-27 00:00,2007-01-27 00:00,,,2006-06-26 08:00,2006-06-30 17:00,,,,,PT_Normal,,,,,PmIRBCcmRWWCSfPlquBqlw,QwWQru9zUEqTIYu3ian0Ig,,,N,0,0,,,2007-02-01 02:42,2007-02-04 01:05,hbe4678,hbe4678,,,0
1312,12457493,14517,6815981,13331,1,100,N,N,N,CP_Units,TT_Task,DT_FixedDUR2,RV_OK,TK_Complete,EM02JPI143,02J OP's & Serv. Model Review Comments Resolution,,,,0,0,0,0,40,0,0,0,,2006-06-28 08:00,2006-07-04 17:00,2007-07-31 08:01,2007-07-31 08:01,,2007-01-27 00:00,2007-01-27 00:00,,,2006-06-28 08:00,2006-07-04 17:00,,,,,PT_Normal,,,,,XYEZLeXeSy+wi5v8f0A0Pw,wMHxtIxGh0m6ufaL8FyiKA,,,N,0,0,,,2007-02-01 02:42,2007-02-04 01:05,hbe4678,hbe4678,,,0
1313,12457494,14517,6815981,13331,1,100,N,N,N,CP_Units,TT_Task,DT_FixedDUR2,RV_OK,TK_Complete,EM02YPI142,02Y Detail OP's & Services Model Review Mtg,,,,0,0,0,0,40,0,0,0,,2006-06-03 00:00,2006-06-06 00:00,2006-12-25 08:00,2006-12-25 08:00,,2007-01-27 00:00,2007-01-27 00:00,,,2006-06-05 08:00,2006-06-09 17:00,,,,,PT_Normal,,,,,/FE86i1MQ22VIMjCSLZ5fg,UjdqGCSohEWw0tKANsJyJQ,,,N,0,0,,,2007-02-01 02:42,2007-02-04 01:05,hbe4678,hbe4678,,,0
1314,12457495,14517,6815981,13331,1,100,N,N,N,CP_Units,TT_Task,DT_FixedDUR2,RV_OK,TK_Complete,EM02YPI143,02Y OP's & Serv. Model Review Comments Resolution,,,,0,0,0,0,40,0,0,0,,2006-06-06 08:00,2006-06-27 00:00,2006-12-25 08:00,2006-12-25 08:00,,2007-01-27 00:00,2007-01-27 00:00,,,2006-06-12 08:00,2006-06-16 17:00,,,,,PT_Normal,,,,,1+6Lfh9RTkW/4ejCwZc4OA,MA2z1rWFqUiDcxJRfbkW2Q,,,N,0,0,,,2007-02-01 02:42,2007-02-04 01:05,hbe4678,hbe4678,,,0
1315,12457496,14517,6815981,13330,1,100,N,N,N,CP_Units,TT_Task,DT_FixedDUR2,RV_OK,TK_Complete,EK02YPI050,02Y Model Comment Resolution Approval,,,,0,0,0,0,24,0,0,0,,2006-02-01 00:00,2006-02-03 00:00,2006-12-25 08:00,2006-12-25 08:00,,2007-01-27 00:00,2007-01-27 00:00,,,2006-03-01 08:00,2006-03-03 17:00,,,,,PT_Normal,,,,,cc/BLAaBSP2Bh+xvlHOhgg,WdSGJ3vAS0aSDuxFEKUrZQ,,,N,0,0,,,2007-02-01 02:42,2007-02-04 01:05,hbe4678,hbe4678,,,0
1316,12457497,14517,6815981,13331,1,100,N,N,N,CP_Units,TT_Task,DT_FixedDUR2,RV_OK,TK_Complete,EM02API200,02A Equipment Location Plans,,,,0,0,0,0,80,0,0,0,,2006-02-23 00:00,2006-03-28 17:00,2007-05-07 08:00,2007-05-07 08:00,,2007-01-27 00:00,2007-01-27 00:00,,,2006-02-27 08:00,2006-03-10 17:00,,,,,PT_Normal,,,,,u8wz9bQAS9yP2jSfV0Sq/g,UWmTJ6bETk6CSONfmhn//x,,,N,0,0,,,2007-02-01 02:42,2007-02-04 01:05,hbe4678,hbe4678,,,0
1317,12457498,14517,6815981,13331,1,100,N,N,N,CP_Units,TT_Task,DT_FixedDUR2,RV_OK,TK_Complete,EM02QPI200,02Q Equipment Location Plans,,,,0,0,0,0,120,0,0,0,,2006-02-27 08:00,2006-03-20 00:00,2007-05-07 08:00,2007-05-07 08:00,,2007-01-27 00:00,2007-01-27 00:00,,,2006-02-27 08:00,2006-03-17 17:00,,,,,PT_Normal,,,,,2bqFjjBZSryQ7I7aEA+jVw,bzqoIc3RW0a8FZF5y3v6KQ,,,N,0,0,,,2007-02-01 02:42,2007-02-04 01:05,hbe4678,hbe4678,,,0
1318,12457499,14517,6815981,13331,1,100,N,N,N,CP_Units,TT_Task,DT_FixedDUR2,RV_OK,TK_Complete,EM02BPI200,02B Equipment Location Plans,,,,0,0,0,0,80,0,0,0,,2006-02-27 08:00,2006-03-20 17:00,2007-05-07 08:00,2007-05-07 08:00,,2007-01-27 00:00,2007-01-27 00:00,,,2006-02-27 08:00,2006-03-10 17:00,,,,,PT_Normal,,,,,lKoH3aLPSk66XGbFiMudlw,8P1i/5PCVEKNNz9a4WiNEQ,,,N,0,0,,,2007-02-01 02:42,2007-02-04 01:05,hbe4678,hbe4678,,,0
1319,12457500,14517,6815981,13331,1,100,N,N,N,CP_Units,TT_Task,DT_FixedDUR2,RV_OK,TK_Complete,EM02CPI200,02C Equipment Location Plans,,,,0,0,0,0,200,0,0,0,,2006-02-27 08:00,2006-04-03 17:00,2007-05-07 08:00,2007-05-07 08:00,,2007-01-27 00:00,2007-01-27 00:00,,,2006-02-27 08:00,2006-04-03 17:00,,,,,PT_Normal,,,,,Ru0l4Pj8QTOiTGciaHXTBQ,8P1i/5PCVEKNNz9a4WiNEQ,,,N,0,0,,,2007-02-01 02:42,2007-02-04 01:05,hbe4678,hbe4678,,,0
1320,12457501,14517,6815981,13331,1,100,N,N,N,CP_Units,TT_Task,DT_FixedDUR2,RV_OK,TK_Complete,EM02DPI200,02D Equipment Location Plans,,,,0,0,0,0,80,0,0,0,,2006-02-27 08:00,2006-03-20 17:00,2007-05-07 08:00,2007-05-07 08:00,,2007-01-27 00:00,2007-01-27 00:00,,,2006-02-27 08:00,2006-03-10 17:00,,,,,PT_Normal,,,,,COPwchCUTACj9NaQrwcNeQ,8P1i/5PCVEKNNz9a4WiNEQ,,,N,0,0,,,2007-02-01 02:42,2007-02-04 01:05,hbe4678,hbe4678,,,0
1321,12457502,14517,6815981,13331,1,100,N,N,N,CP_Units,TT_Task,DT_FixedDUR2,RV_OK,TK_Complete,EM02EPI200,02E Equipment Location Plans,,,,0,0,0,0,120,0,0,0,,2006-02-27 08:00,2006-03-20 17:00,2007-05-07 08:00,2007-05-07 08:00,,2007-01-27 00:00,2007-01-27 00:00,,,2006-02-27 08:00,2006-03-17 17:00,,,,,PT_Normal,,,,,3GHbzsILTOGwEwnUmh+rXw,gP3BYprBqku2Y2SgtQDI8g,,,N,0,0,,,2007-02-01 02:42,2007-02-04 01:05,hbe4678,hbe4678,,,0
1322,12457503,14517,6815981,13331,1,100,N,N,N,CP_Units,TT_Task,DT_FixedDUR2,RV_OK,TK_Complete,EM02FPI200,02F Equipment Location Plans,,,,0,0,0,0,80,0,0,0,,2006-02-27 08:00,2006-03-20 00:00,2007-05-07 08:00,2007-05-07 08:00,,2007-01-27 00:00,2007-01-27 00:00,,,2006-02-27 08:00,2006-03-10 17:00,,,,,PT_Normal,,,,,AmcDAGT8Td6Pk2NevLvmYg,yg3MKvaiiUKVkSUHKcvOjA,,,N,0,0,,,2007-02-01 02:42,2007-02-04 01:05,hbe4678,hbe4678,,,0
1323,12457504,14517,6815981,13331,1,100,N,N,N,CP_Units,TT_Task,DT_FixedDUR2,RV_OK,TK_Complete,EM02LPI140,02L Model Review Comment Resolution,,,,0,0,0,0,24,0,0,0,,2006-01-27 00:00,2006-02-01 00:00,2007-01-09 08:01,2007-01-09 08:01,,2007-01-27 00:00,2007-01-27 00:00,,,2006-02-27 08:00,2006-03-01 17:00,,,,,PT_Normal,,,,,Itr+hphjRrWGJLOflaAo+w,bpci+jsxPU6yPM8OEardih,,,N,0,0,,,2007-02-01 02:42,2007-02-04 01:05,hbe4678,hbe4678,,,0
1324,12457505,14517,6815981,13331,1,100,N,N,N,CP_Units,TT_Task,DT_FixedDUR2,RV_OK,TK_Complete,EM02LPI141,02L Detail OP's & Services Model Review Mtg,,,,0,0,0,0,16,0,0,0,,2006-06-23 08:00,2006-06-26 17:00,2007-01-09 08:01,2007-01-09 08:01,,2007-01-27 00:00,2007-01-27 00:00,,,2006-06-23 08:00,2006-06-26 17:00,,,,,PT_Normal,,,,,kuVzwzHKSy6ECARnmVf+UA,tCVPgOZGkECgC/EevOj2rh,,,N,0,0,,,2007-02-01 02:42,2007-02-04 01:05,hbe4678,hbe4678,,,0
1325,12457506,14517,6815981,13331,1,100,N,N,N,CP_Units,TT_Task,DT_FixedDUR2,RV_OK,TK_Complete,EM02LPI142,02L OP's & Serv. Model Review Comment Resolution,,,,0,0,0,0,16,0,0,0,,2006-06-27 08:00,2006-07-24 08:00,2007-01-09 08:01,2007-01-09 08:01,,2007-01-27 00:00,2007-01-27 00:00,,,2006-06-27 08:00,2006-06-28 17:00,,,,,PT_Normal,,,,,oAR4n359Q5a8kYcipOiuow,4GHdQhfKEEOWsLqqeGJ7fQ,,,N,0,0,,,2007-02-01 02:42,2007-02-04 01:05,hbe4678,hbe4678,,,0
1326,12457507,14517,6815981,13331,1,100,N,N,N,CP_Units,TT_Task,DT_FixedDUR2,RV_OK,TK_Complete,EM02PPI141,02P Model Review Comment Resolution,,,,0,0,0,0,32,0,0,0,,2006-01-23 08:00,2006-01-26 17:00,2007-05-03 08:01,2007-05-03 08:01,,2007-01-27 00:00,2007-01-27 00:00,,,2006-01-23 08:00,2006-01-26 17:00,,,,,PT_Normal,,,,,lZvmlSZrSsWjQzQkJgg4Xw,UsKu+JMIbUa0vhBqPzay2x,,,N,0,0,,,2007-02-01 02:42,2007-02-04 01:05,hbe4678,hbe4678,,,0
1327,12457508,14517,6815981,13331,1,100,N,N,N,CP_Units,TT_Task,DT_FixedDUR2,RV_OK,TK_Complete,EM02PPI142,02P Detail OP's & Service Model Review Mtg,,,,0,0,0,0,16,0,0,0,,2006-04-18 00:00,2006-04-20 00:00,2007-05-03 08:01,2007-05-03 08:01,,2007-01-27 00:00,2007-01-27 00:00,,,2006-04-21 08:00,2006-04-24 17:00,,,,,PT_Normal,,,,,s0tkdZunScy4ONXLEGuz1A,1rnZA2lf7EyTMImJ3gjmJQ,,,N,0,0,,,2007-02-01 02:42,2007-02-04 01:05,hbe4678,hbe4678,,,0
1328,12457509,14517,6815981,13331,1,100,N,N,N,CP_Units,TT_Task,DT_FixedDUR2,RV_OK,TK_Complete,EM02PPI143,02P OP's & Serv. Model Review Comment Resolution,,,,0,0,0,0,16,0,0,0,,2006-04-21 08:00,2006-05-01 00:00,2007-05-03 08:01,2007-05-03 08:01,,2007-01-27 00:00,2007-01-27 00:00,,,2006-04-21 08:00,2006-04-24 17:00,,,,,PT_Normal,,,,,LGOD2ZlaRpK4WFKL6YxQ2g,1rnZA2lf7EyTMImJ3gjmJQ,,,N,0,0,,,2007-02-01 02:42,2007-02-04 01:05,hbe4678,hbe4678,,,0
1329,12457510,14517,6815981,13331,1,100,N,N,N,CP_Units,TT_Task,DT_FixedDUR2,RV_OK,TK_Complete,EM02MPI140,02M Model Review Comment Resolution,,,,0,0,0,0,24,0,0,0,,2006-01-12 00:00,2006-01-16 00:00,2007-05-07 08:00,2007-05-07 08:00,,2007-01-27 00:00,2007-01-27 00:00,,,2006-02-27 08:00,2006-03-01 17:00,,,,,PT_Normal,,,,,6+qdRYaJSb26X4YY+6aKUQ,aAApwdgvzkiMWaDxC7A/dx,,,N,0,0,,,2007-02-01 02:42,2007-02-04 01:05,hbe4678,hbe4678,,,0
1330,12457511,14517,6815981,13331,1,100,N,N,N,CP_Units,TT_Task,DT_FixedDUR2,RV_OK,TK_Complete,EM02MPI141,02M Detail OP's & Services Model Review Mtg,,,,0,0,0,0,16,0,0,0,,2006-06-27 08:00,2006-06-28 00:00,2007-06-19 08:01,2007-06-19 08:01,,2007-01-27 00:00,2007-01-27 00:00,,,2006-06-27 08:00,2006-06-28 17:00,,,,,PT_Normal,,,,,W5bRnWM1RD+d1rC9wgDsaw,aAApwdgvzkiMWaDxC7A/dx,,,N,0,0,,,2007-02-01 02:42,2007-02-04 01:05,hbe4678,hbe4678,,,0
1331,12457512,14517,6815981,13331,1,100,N,N,N,CP_Units,TT_Task,DT_FixedDUR2,RV_OK,TK_Complete,EM02MPI142,02M OP's & Serv. Model Review Comment Resolution,,,,0,0,0,0,16,0,0,0,,2006-06-29 00:00,2006-07-03 17:00,2007-06-19 08:01,2007-06-19 08:01,,2007-01-27 00:00,2007-01-27 00:00,,,2006-06-30 08:00,2006-07-03 17:00,,,,,PT_Normal,,,,,I3i4GNRhQhmJrzApUg0e2g,aAApwdgvzkiMWaDxC7A/dx,,,N,0,0,,,2007-02-01 02:42,2007-02-04 01:05,hbe4678,hbe4678,,,0
1332,12457513,14517,6815981,13331,1,100,N,N,N,CP_Units,TT_Task,DT_FixedDUR2,RV_OK,TK_Complete,EM02QPI141,02Q Model Review Comment Resolution,,,,0,0,0,0,24,0,0,0,,2006-01-18 00:00,2006-01-20 00:00,2007-05-07 08:00,2007-05-07 08:00,,2007-01-27 00:00,2007-01-27 00:00,,,2006-02-27 08:00,2006-03-01 17:00,,,,,PT_Normal,,,,,C+6/CW0MQvekyzVm3h1aKQ,idK2rshIRkScNHdRwM2vBh,,,N,0,0,,,2007-02-01 02:42,2007-02-04 01:05,hbe4678,hbe4678,,,0
1333,12457514,14517,6815981,13331,1,100,N,N,N,CP_Units,TT_Task,DT_FixedDUR2,RV_OK,TK_Complete,EM02QPI142,02Q Detail OP's & Service Model Review Mtg,,,,0,0,0,0,16,0,0,0,,2006-05-31 00:00,2006-05-31 00:00,2007-05-26 08:01,2007-05-26 08:01,,2007-01-27 00:00,2007-01-27 00:00,,,2006-06-05 08:00,2006-06-06 17:00,,,,,PT_Normal,,,,,s4sS0EaYQkGSqj2C2BOoZw,UuUkXXMET0SkqNFuL/iHWg,,,N,0,0,,,2007-02-01 02:42,2007-02-04 01:05,hbe4678,hbe4678,,,0
1334,12457515,14517,6815981,13331,1,100,N,N,N,CP_Units,TT_Task,DT_FixedDUR2,RV_OK,TK_Complete,EM02QPI143,02Q OP's & Service Model Review Comment Resolution,,,,0,0,0,0,16,0,0,0,,2006-05-31 00:00,2006-06-13 17:00,2007-05-26 08:01,2007-05-26 08:01,,2007-01-27 00:00,2007-01-27 00:00,,,2006-06-07 08:00,2006-06-08 17:00,,,,,PT_Normal,,,,,FATagaryTxCw60V4NjwRxg,UuUkXXMET0SkqNFuL/iHWg,,,N,0,0,,,2007-02-01 02:42,2007-02-04 01:05,hbe4678,hbe4678,,,0
1335,12457516,14517,6815981,13331,1,100,N,N,N,CP_Units,TT_Task,DT_FixedDUR2,RV_OK,TK_Complete,EM02NPI141,02N Model Review Comment Resolution,,,,0,0,0,0,24,0,0,0,,2006-01-27 00:00,2006-01-31 00:00,2007-05-07 08:00,2007-05-07 08:00,,2007-01-27 00:00,2007-01-27 00:00,,,2006-02-27 08:00,2006-03-01 17:00,,,,,PT_Normal,,,,,46pcnjsJSPWGzbOORI4lEA,8hAMSUNTA0CD21p4qKAtYB,,,N,0,0,,,2007-02-01 02:42,2007-02-04 01:05,hbe4678,hbe4678,,,0
1336,12457517,14517,6815981,13331,1,100,N,N,N,CP_Units,TT_Task,DT_FixedDUR2,RV_OK,TK_Complete,EM02NPI142,02N Detail OP's & Service Model Review Mtg,,,,0,0,0,0,16,0,0,0,,2006-05-16 00:00,2006-05-17 00:00,2007-05-28 08:01,2007-05-28 08:01,,2007-01-27 00:00,2007-01-27 00:00,,,2006-05-19 08:00,2006-05-22 17:00,,,,,PT_Normal,,,,,fygO7ocCQLORCkDlNzrDfw,0gqyHUbSqkigSv1lT4hrfA,,,N,0,0,,,2007-02-01 02:42,2007-02-04 01:05,hbe4678,hbe4678,,,0
1337,12457518,14517,6815981,13331,1,100,N,N,N,CP_Units,TT_Task,DT_FixedDUR2,RV_OK,TK_Complete,EM02NPI143,02N OP's & Service Model Review Comment Resolution,,,,0,0,0,0,16,0,0,0,,2006-05-17 00:00,2006-05-31 00:00,2007-05-28 08:01,2007-05-28 08:01,,2007-01-27 00:00,2007-01-27 00:00,,,2006-05-23 08:00,2006-05-24 17:00,,,,,PT_Normal,,,,,NlzSb4ilQd69rXyqLAj0rA,0gqyHUbSqkigSv1lT4hrfA,,,N,0,0,,,2007-02-01 02:42,2007-02-04 01:05,hbe4678,hbe4678,,,0
1338,12457519,14517,6815981,13331,1,100,N,N,N,CP_Units,TT_Task,DT_FixedDUR2,RV_OK,TK_Complete,EM02FPI140,02F Model Review Comment Resolution,,,,0,0,0,0,24,0,0,0,,2006-01-17 00:00,2006-01-25 00:00,2007-05-05 08:01,2007-05-05 08:01,,2007-01-27 00:00,2007-01-27 00:00,,,2006-01-30 08:00,2006-02-01 17:00,,,,,PT_Normal,,,,,KNJAnV8/Ruqtg4pSvAxzyg,29MEug7qTkmjUK0YSOH8Gh,,,N,0,0,,,2007-02-01 02:42,2007-02-04 01:05,hbe4678,hbe4678,,,0
1339,12457520,14517,6815981,13331,1,100,N,N,N,CP_Units,TT_Task,DT_FixedDUR2,RV_OK,TK_Complete,EM02FPI141,02F Detail OP's & Services Model Review Mtg,,,,0,0,0,0,16,0,0,0,,2006-06-15 08:00,2006-06-20 00:00,2007-05-05 08:01,2007-05-05 08:01,,2007-01-27 00:00,2007-01-27 00:00,,,2006-06-15 08:00,2006-06-16 17:00,,,,,PT_Normal,,,,,tDV6wQ3JQ6KGpWQrnJu4sQ,29MEug7qTkmjUK0YSOH8Gh,,,N,0,0,,,2007-02-01 02:42,2007-02-04 01:05,hbe4678,hbe4678,,,0
1340,12457521,14517,6815981,13331,1,100,N,N,N,CP_Units,TT_Task,DT_FixedDUR2,RV_OK,TK_Complete,EM02FPI142,02F OP's & Serv. Model Review Comment Resolution,,,,0,0,0,0,16,0,0,0,,2006-06-26 08:00,2006-06-29 00:00,2007-05-05 08:01,2007-05-05 08:01,,2007-01-27 00:00,2007-01-27 00:00,,,2006-06-26 08:00,2006-06-27 17:00,,,,,PT_Normal,,,,,kSbwYBhISJ2gxPPJXB6rcg,29MEug7qTkmjUK0YSOH8Gh,,,N,0,0,,,2007-02-01 02:42,2007-02-04 01:05,hbe4678,hbe4678,,,0
1341,12457522,14517,6815981,13331,1,100,N,N,N,CP_Units,TT_Task,DT_FixedDUR2,RV_OK,TK_Complete,EM02EPI140,02E Model Review Comment Resolution,,,,0,0,0,0,24,0,0,0,,2005-12-15 00:00,2005-12-19 00:00,2007-04-15 08:01,2007-04-15 08:01,,2007-01-27 00:00,2007-01-27 00:00,,,2006-01-30 08:00,2006-02-01 17:00,,,,,PT_Normal,,,,,sA1B1SQpS3WNNR1iLBxsyQ,y/af05fQPU28j+Ver63iCB,,,N,0,0,,,2007-02-01 02:42,2007-02-04 01:05,hbe4678,hbe4678,,,0
1342,12457523,14517,6815981,13331,1,100,N,N,N,CP_Units,TT_Task,DT_FixedDUR2,RV_OK,TK_Complete,EM02EPI141,02E Detail OP's & Services Model Review Mtg,,,,0,0,0,0,16,0,0,0,,2006-06-14 08:00,2006-06-19 00:00,2007-04-15 08:01,2007-04-15 08:01,,2007-01-27 00:00,2007-01-27 00:00,,,2006-06-14 08:00,2006-06-15 17:00,,,,,PT_Normal,,,,,f9SFjA2fS0O/18edIPUhxQ,y/af05fQPU28j+Ver63iCB,,,N,0,0,,,2007-02-01 02:42,2007-02-04 01:05,hbe4678,hbe4678,,,0
1343,12457524,14517,6815981,13331,1,100,N,N,N,CP_Units,TT_Task,DT_FixedDUR2,RV_OK,TK_Complete,EM02EPI142,02E OP's & Serv. Model Review Comment Resolution,,,,0,0,0,0,16,0,0,0,,2006-06-22 00:00,2006-07-12 00:00,2007-04-15 08:01,2007-04-15 08:01,,2007-01-27 00:00,2007-01-27 00:00,,,2006-06-19 08:00,2006-06-20 17:00,,,,,PT_Normal,,,,,6l44xwHPTsmNmz+s9g+UwQ,y/af05fQPU28j+Ver63iCB,,,N,0,0,,,2007-02-01 02:42,2007-02-04 01:05,hbe4678,hbe4678,,,0
1344,12457525,14517,6815981,13331,1,100,N,N,N,CP_Units,TT_Task,DT_FixedDUR2,RV_OK,TK_Complete,EM02API136,02A IDP - Detail Design,,,,0,0,0,0,40,0,0,0,,2006-06-29 00:00,2006-07-04 17:00,2007-05-27 08:01,2007-05-27 08:01,,2007-01-27 00:00,2007-01-27 00:00,,,2006-06-28 08:00,2006-07-04 17:00,,,,,PT_Normal,,,,,23aYn2TMRcmnqOMooqA92A,Nui8F/JTaUuhv5XJgSF1Vx,,,N,0,0,,,2007-02-01 02:42,2007-02-04 01:05,hbe4678,hbe4678,,,0
1345,12457526,14517,6815981,13331,1,100,N,N,N,CP_Units,TT_Task,DT_FixedDUR2,RV_OK,TK_Complete,EM02BPI133,02B IDP - Plant Layout,,,,0,0,0,0,16,0,0,0,,2006-02-01 08:00,2006-02-02 17:00,2007-04-01 08:01,2007-04-01 08:01,,2007-01-27 00:00,2007-01-27 00:00,,,2006-02-01 08:00,2006-02-02 17:00,,,,,PT_Normal,,,,,HqAbdEIOSoWLPXPqr+rqdQ,xyAwAYXIskWVMUaBb6SnjB,,,N,0,0,,,2007-02-01 02:42,2007-02-04 01:05,hbe4678,hbe4678,,,0
1346,12457527,14517,6815981,13331,1,100,N,N,N,CP_Units,TT_Task,DT_FixedDUR2,RV_OK,TK_Complete,EM02BPI136,02B IDP - Detail Design,,,,0,0,0,0,16,0,0,0,,2006-04-24 08:00,2006-04-25 17:00,2007-04-01 08:01,2007-04-01 08:01,,2007-01-27 00:00,2007-01-27 00:00,,,2006-04-24 08:00,2006-04-25 17:00,,,,,PT_Normal,,,,,qjKikEGrRSO+QVC0kCAnqg,uVMNvZXLOUWLFPKiIdW+/h,,,N,0,0,,,2007-02-01 02:42,2007-02-04 01:05,hbe4678,hbe4678,,,0
1347,12457528,14517,6815981,13331,1,100,N,N,N,CP_Units,TT_Task,DT_FixedDUR2,RV_OK,TK_Complete,EM02CPI133,02C IDP - Plant Layout,,,,0,0,0,0,16,0,0,0,,2006-02-17 00:00,2006-02-21 00:00,2007-05-03 08:01,2007-05-03 08:01,,2007-01-27 00:00,2007-01-27 00:00,,,2006-02-27 08:00,2006-02-28 17:00,,,,,PT_Normal,,,,,OT2IuFk1RC6JQ1C27ZiCFQ,xyAwAYXIskWVMUaBb6SnjB,,,N,0,0,,,2007-02-01 02:42,2007-02-04 01:05,hbe4678,hbe4678,,,0
1348,12457529,14517,6815981,13331,1,100,N,N,N,CP_Units,TT_Task,DT_FixedDUR2,RV_OK,TK_Complete,EM02CPI136,02C IDP - Detail Design,,,,0,0,0,0,16,0,0,0,,2006-08-03 08:00,2006-09-29 00:00,2007-05-03 08:01,2007-05-03 08:01,,2007-01-27 00:00,2007-01-27 00:00,,,2006-08-03 08:00,2006-08-04 17:00,,,,,PT_Normal,,,,,rjgqXnyESGW3agrR8Q+z5g,uVMNvZXLOUWLFPKiIdW+/h,,,N,0,0,,,2007-02-01 02:42,2007-02-04 01:05,hbe4678,hbe4678,,,0
1349,12457530,14517,6815981,13331,1,100,N,N,N,CP_Units,TT_Task,DT_FixedDUR2,RV_OK,TK_Complete,EM02DPI133,02D IDP - Plant Layout,,,,0,0,0,0,16,0,0,0,,2006-01-18 00:00,2006-01-20 00:00,2007-04-24 08:01,2007-04-24 08:01,,2007-01-27 00:00,2007-01-27 00:00,,,2006-02-02 08:00,2006-02-03 17:00,,,,,PT_Normal,,,,,S+6ZSTzXQjuesGGmm2ibZQ,xyAwAYXIskWVMUaBb6SnjB,,,N,0,0,,,2007-02-01 02:42,2007-02-04 01:05,hbe4678,hbe4678,,,0
1350,12457531,14517,6815981,13331,1,100,N,N,N,CP_Units,TT_Task,DT_FixedDUR2,RV_OK,TK_Complete,EM02DPI136,02D IDP - Detail Design,,,,0,0,0,0,40,0,0,0,,2006-06-09 00:00,2006-06-14 00:00,2007-04-24 08:01,2007-04-24 08:01,,2007-01-27 00:00,2007-01-27 00:00,,,2006-06-13 08:00,2006-06-19 17:00,,,,,PT_Normal,,,,,dBgWlil9TdKyP6T+UkRxbQ,uVMNvZXLOUWLFPKiIdW+/h,,,N,0,0,,,2007-02-01 02:42,2007-02-04 01:05,hbe4678,hbe4678,,,0
1351,12457532,14517,6815981,13331,1,100,N,N,N,CP_Units,TT_Task,DT_FixedDUR2,RV_OK,TK_Complete,EM02EPI133,02E IDP - Plant Layout,,,,0,0,0,0,16,0,0,0,,2005-12-20 00:00,2005-12-23 00:00,2007-04-15 08:01,2007-04-15 08:01,,2007-01-27 00:00,2007-01-27 00:00,,,2006-02-02 08:00,2006-02-03 17:00,,,,,PT_Normal,,,,,V4lIKm13QQm/DXV2U/9LlQ,xyAwAYXIskWVMUaBb6SnjB,,,N,0,0,,,2007-02-01 02:42,2007-02-04 01:05,hbe4678,hbe4678,,,0
1352,12457533,14517,6815981,13331,1,100,N,N,N,CP_Units,TT_Task,DT_FixedDUR2,RV_OK,TK_Complete,EM02EPI136,02E IDP - Detail Design,,,,0,0,0,0,40,0,0,0,,2006-07-12 00:00,2006-07-17 17:00,2007-04-15 08:01,2007-04-15 08:01,,2007-01-27 00:00,2007-01-27 00:00,,,2006-07-10 08:00,2006-07-14 17:00,,,,,PT_Normal,,,,,xtooQRrYSielqoPRawt5FA,uVMNvZXLOUWLFPKiIdW+/h,,,N,0,0,,,2007-02-01 02:42,2007-02-04 01:05,hbe4678,hbe4678,,,0
1353,12457534,14517,6815981,13331,1,100,N,N,N,CP_Units,TT_Task,DT_FixedDUR2,RV_OK,TK_Complete,EM02DPI100,"02D Preliminary Drawings for Supersketch J-120,124",,,,0,0,0,0,8,0,0,0,,2005-07-25 00:00,2005-08-01 00:00,2007-04-24 08:01,2007-04-24 08:01,,2007-01-27 00:00,2007-01-27 00:00,,,2005-08-12 08:00,2005-08-12 17:00,,,,,PT_Normal,,,,,4LbZOB3BRCCizIsWdNMHPQ,bT2pMpwPokysy3fPaGQvUR,,,N,0,0,,,2007-02-01 02:42,2007-02-04 01:05,hbe4678,hbe4678,,,0
1354,12457535,14517,6815981,13331,1,100,N,N,N,CP_Units,TT_Task,DT_FixedDUR2,RV_OK,TK_Complete,EM02BPI141,02B Model Review Comment Resolution,,,,0,0,0,0,24,0,0,0,,2006-01-30 08:00,2006-01-31 17:00,2007-04-01 08:01,2007-04-01 08:01,,2007-01-27 00:00,2007-01-27 00:00,,,2006-01-30 08:00,2006-02-01 17:00,,,,,PT_Normal,,,,,T+kPAZBJTJ+Q3cWEtoKyrw,VWDux/mO7EKDqhDfqAmMNh,,,N,0,0,,,2007-02-01 02:42,2007-02-04 01:05,hbe4678,hbe4678,,,0
1355,12457536,14517,6815981,13331,1,100,N,N,N,CP_Units,TT_Task,DT_FixedDUR2,RV_OK,TK_Complete,EM02BPI142,02B Detail OP's & Service Model Review Mtg,,,,0,0,0,0,16,0,0,0,,2006-04-18 08:00,2006-04-19 17:00,2007-04-01 08:01,2007-04-01 08:01,,2007-01-27 00:00,2007-01-27 00:00,,,2006-04-18 08:00,2006-04-19 17:00,,,,,PT_Normal,,,,,GHi8ZTUHSwysfvvBsJ6euA,qsQ+f0zDCEayEkWfyIYIvQ,,,N,0,0,,,2007-02-01 02:42,2007-02-04 01:05,hbe4678,hbe4678,,,0
1356,12457537,14517,6815981,13331,1,100,N,N,N,CP_Units,TT_Task,DT_FixedDUR2,RV_OK,TK_Complete,EM02BPI143,02B OP's & Serv. Model Review Comment Resolution,,,,0,0,0,0,16,0,0,0,,2006-04-20 08:00,2006-04-21 17:00,2007-04-01 08:01,2007-04-01 08:01,,2007-01-27 00:00,2007-01-27 00:00,,,2006-04-20 08:00,2006-04-21 17:00,,,,,PT_Normal,,,,,eDxcUJOZSTG9swzAJjgMUg,qsQ+f0zDCEayEkWfyIYIvQ,,,N,0,0,,,2007-02-01 02:42,2007-02-04 01:05,hbe4678,hbe4678,,,0
1357,12457538,14517,6815981,13331,1,100,N,N,N,CP_Units,TT_Task,DT_FixedDUR2,RV_OK,TK_Complete,EM02YPI123,02Y Model Review Comment Resolution,,,,0,0,0,0,32,0,0,0,,2006-01-24 00:00,2006-01-27 00:00,2006-12-25 08:00,2006-12-25 08:00,,2007-01-27 00:00,2007-01-27 00:00,,,2006-02-27 08:00,2006-03-02 17:00,,,,,PT_Normal,,,,,vWUkhh3iSYm9m+G0oaGt4A,qTpQLdC5REusR4pNgGcexh,,,N,0,0,,,2007-02-01 02:42,2007-02-04 01:05,hbe4678,hbe4678,,,0
1358,12457539,14517,6815981,13330,1,100,N,N,N,CP_Drtn,TT_Task,DT_FixedDUR2,RV_OK,TK_Complete,EM02GPI021,02G Model Review Comment Resolution,,,,0,0,0,0,40,0,0,0,,2006-05-22 00:00,2006-07-05 17:00,2007-05-07 08:00,2007-05-07 08:00,,2007-01-27 00:00,2007-01-27 00:00,,,2006-05-23 08:00,2006-05-29 17:00,,,,,PT_Normal,,,,,ISN2MMXuSdKqumlK7Rs0bQ,,,,N,0,0,,,2007-02-01 02:42,2007-02-04 01:05,hbe4678,hbe4678,,,0
1359,12457540,14517,6815981,13330,1,100,N,N,N,CP_Drtn,TT_Task,DT_FixedDUR2,RV_OK,TK_Complete,EM02JPI021,02J Model Review Comment Resolution,,,,0,0,0,0,24,0,0,0,,2006-02-01 08:00,2006-02-03 17:00,2007-05-07 08:00,2007-05-07 08:00,,2007-01-27 00:00,2007-01-27 00:00,,,2006-02-01 08:00,2006-02-03 17:00,,,,,PT_Normal,,,,,zrPZvE14Sfim08fkWP3K8Q,,,,N,0,0,,,2007-02-01 02:42,2007-02-04 01:05,hbe4678,hbe4678,,,0
1360,12457541,14517,6815981,13330,1,100,N,N,N,CP_Units,TT_Task,DT_FixedDUR2,RV_OK,TK_Complete,EM02KPI051,02K Planning Release,,,,0,0,0,0,40,0,0,0,,2006-01-20 00:00,2006-01-25 00:00,2007-05-20 08:01,2007-05-20 08:01,,2007-01-27 00:00,2007-01-27 00:00,,,2006-02-27 08:00,2006-03-03 17:00,,,,,PT_Normal,,,,,qPlmDFBpQ7SN7+f8aKP0kA,TQId4u10v0KEp6w/qqrjuR,,,N,0,0,,,2007-02-01 02:42,2007-02-04 01:05,hbe4678,hbe4678,,,0
1361,12457542,14517,6815981,13331,1,100,N,N,N,CP_Units,TT_Task,DT_FixedDUR2,RV_OK,TK_Complete,EM02KPI141,02K Detail OP's & Services Model Review Mtg,,,,0,0,0,0,16,0,0,0,,2006-07-18 08:00,2006-07-19 00:00,2007-06-18 08:00,2007-06-18 08:00,,2007-01-27 00:00,2007-01-27 00:00,,,2006-07-18 08:00,2006-07-19 17:00,,,,,PT_Normal,,,,,H4G2jZ6LTmeK0+9e8f95Hw,ONpzUdw3uka+Gb2edW46xh,,,N,0,0,,,2007-02-01 02:42,2007-02-04 01:05,hbe4678,hbe4678,,,0
1362,12457543,14517,6815981,13331,1,100,N,N,N,CP_Units,TT_Task,DT_FixedDUR2,RV_OK,TK_Complete,EM02KPI142,02K OP's & Serv. Model Review Comment Resolution,,,,0,0,0,0,16,0,0,0,,2006-07-20 00:00,2006-08-16 00:00,2007-06-18 08:00,2007-06-18 08:00,,2007-01-27 00:00,2007-01-27 00:00,,,2006-07-24 08:00,2006-07-25 17:00,,,,,PT_Normal,,,,,dUJV8DdlQL2u/h6jkab71w,kbELaFffJEOaqYkDW0XWwA,,,N,0,0,,,2007-02-01 02:42,2007-02-04 01:05,hbe4678,hbe4678,,,0
1363,12457544,14517,6815981,13331,1,100,N,N,N,CP_Units,TT_Task,DT_FixedDUR2,RV_OK,TK_Complete,EM02API141,02A Model Review Comment Resolution,,,,0,0,0,0,24,0,0,0,,2006-01-18 00:00,2006-01-25 00:00,2007-05-07 08:00,2007-05-07 08:00,,2007-01-27 00:00,2007-01-27 00:00,,,2006-01-30 08:00,2006-02-01 17:00,,,,,PT_Normal,,,,,TYC+0tCmTaeFkoM4wtPhFA,p2aVtRluvUGL30HxnWOsIR,,,N,0,0,,,2007-02-01 02:42,2007-02-04 01:05,hbe4678,hbe4678,,,0
1364,12457545,14517,6815981,13331,1,100,N,N,N,CP_Units,TT_Task,DT_FixedDUR2,RV_OK,TK_Complete,EM02API142,02A Detail OP's & Service Model Review Mtg,,,,0,0,0,0,16,0,0,0,,2006-06-19 08:00,2006-06-20 17:00,2007-05-27 08:01,2007-05-27 08:01,,2007-01-27 00:00,2007-01-27 00:00,,,2006-06-19 08:00,2006-06-20 17:00,,,,,PT_Normal,,,,,Drzt1XGySCKA8zyyRH1MDw,p2aVtRluvUGL30HxnWOsIR,,,N,0,0,,,2007-02-01 02:42,2007-02-04 01:05,hbe4678,hbe4678,,,0
1365,12457546,14517,6815981,13331,1,100,N,N,N,CP_Units,TT_Task,DT_FixedDUR2,RV_OK,TK_Complete,EM02API143,02A OP's & Serv. Model Review Comment Resolution,,,,0,0,0,0,16,0,0,0,,2006-06-26 08:00,2006-06-29 00:00,2007-05-27 08:01,2007-05-27 08:01,,2007-01-27 00:00,2007-01-27 00:00,,,2006-06-26 08:00,2006-06-27 17:00,,,,,PT_Normal,,,,,ycNShM+4T8+6KnDlAqZ5YA,p2aVtRluvUGL30HxnWOsIR,,,N,0,0,,,2007-02-01 02:42,2007-02-04 01:05,hbe4678,hbe4678,,,0
1366,12457547,14517,6815981,13331,1,100,N,N,N,CP_Units,TT_Task,DT_FixedDUR2,RV_OK,TK_Complete,EM02MPI133,02M IDP - Plant Layout,,,,0,0,0,0,16,0,0,0,,2006-01-17 00:00,2006-01-18 00:00,2007-05-07 08:00,2007-05-07 08:00,,2007-01-27 00:00,2007-01-27 00:00,,,2006-02-27 08:00,2006-02-28 17:00,,,,,PT_Normal,,,,,3e/vIVRkTZWwrxCR69B2sw,xyAwAYXIskWVMUaBb6SnjB,,,N,0,0,,,2007-02-01 02:42,2007-02-04 01:05,hbe4678,hbe4678,,,0
1367,12457548,14517,6815981,13331,1,100,N,N,N,CP_Units,TT_Task,DT_FixedDUR2,RV_OK,TK_Complete,EM02MPI136,02M IDP - Detail Design,,,,0,0,0,0,40,0,0,0,,2006-07-04 08:00,2006-07-10 17:00,2007-06-19 08:01,2007-06-19 08:01,,2007-01-27 00:00,2007-01-27 00:00,,,2006-07-04 08:00,2006-07-10 17:00,,,,,PT_Normal,,,,,naw3Q6A0TAqYZuY06LddDg,uVMNvZXLOUWLFPKiIdW+/h,,,N,0,0,,,2007-02-01 02:42,2007-02-04 01:05,hbe4678,hbe4678,,,0
1368,12457549,14517,6815981,13331,1,100,N,N,N,CP_Units,TT_Task,DT_FixedDUR2,RV_OK,TK_Complete,EM02NPI133,02N IDP - Plant Layout,,,,0,0,0,0,16,0,0,0,,2006-02-01 08:00,2006-02-02 17:00,2007-05-07 08:00,2007-05-07 08:00,,2007-01-27 00:00,2007-01-27 00:00,,,2006-02-01 08:00,2006-02-02 17:00,,,,,PT_Normal,,,,,zIFVZmINS9O19r6LXxei4g,xyAwAYXIskWVMUaBb6SnjB,,,N,0,0,,,2007-02-01 02:42,2007-02-04 01:05,hbe4678,hbe4678,,,0
1369,12457550,14517,6815981,13331,1,100,N,N,N,CP_Units,TT_Task,DT_FixedDUR2,RV_OK,TK_Complete,EM02NPI136,02N IDP - Detail Design,,,,0,0,0,0,40,0,0,0,,2006-06-05 00:00,2006-06-09 00:00,2007-05-28 08:01,2007-05-28 08:01,,2007-01-27 00:00,2007-01-27 00:00,,,2006-06-12 08:00,2006-06-16 17:00,,,,,PT_Normal,,,,,Yka+20biR8iW8M0P6VXOgw,uVMNvZXLOUWLFPKiIdW+/h,,,N,0,0,,,2007-02-01 02:42,2007-02-04 01:05,hbe4678,hbe4678,,,0
1370,12457551,14517,6815981,13331,1,100,N,N,N,CP_Units,TT_Task,DT_FixedDUR2,RV_OK,TK_Complete,EM02PPI133,02P IDP - Plant Layout,,,,0,0,0,0,16,0,0,0,,2006-01-27 00:00,2006-01-31 00:00,2007-05-03 08:01,2007-05-03 08:01,,2007-01-27 00:00,2007-01-27 00:00,,,2006-03-03 08:00,2006-03-06 17:00,,,,,PT_Normal,,,,,Jn6cyPLcRtOnJxCdaaLWqw,xyAwAYXIskWVMUaBb6SnjB,,,N,0,0,,,2007-02-01 02:42,2007-02-04 01:05,hbe4678,hbe4678,,,0
1371,12457552,14517,6815981,13331,1,100,N,N,N,CP_Units,TT_Task,DT_FixedDUR2,RV_OK,TK_Complete,EM02PPI136,02P IDP - Detail Design,,,,0,0,0,0,16,0,0,0,,2006-05-01 00:00,2006-05-01 00:00,2007-05-03 08:01,2007-05-03 08:01,,2007-01-27 00:00,2007-01-27 00:00,,,2006-05-11 08:00,2006-05-12 17:00,,,,,PT_Normal,,,,,dCPE7MQKRbCvW6TcMVvItg,uVMNvZXLOUWLFPKiIdW+/h,,,N,0,0,,,2007-02-01 02:42,2007-02-04 01:05,hbe4678,hbe4678,,,0
1372,12457553,14517,6815981,13331,1,100,N,N,N,CP_Units,TT_Task,DT_FixedDUR2,RV_OK,TK_Complete,EM02QPI133,02Q IDP - Plant Layout,,,,0,0,0,0,16,0,0,0,,2006-01-23 00:00,2006-01-27 00:00,2007-05-07 08:00,2007-05-07 08:00,,2007-01-27 00:00,2007-01-27 00:00,,,2006-03-02 08:00,2006-03-03 17:00,,,,,PT_Normal,,,,,GOGlAFFKT0qLKK0xxNWpWQ,xyAwAYXIskWVMUaBb6SnjB,,,N,0,0,,,2007-02-01 02:42,2007-02-04 01:05,hbe4678,hbe4678,,,0
1373,12457554,14517,6815981,13331,1,100,N,N,N,CP_Units,TT_Task,DT_FixedDUR2,RV_OK,TK_Complete,EM02QPI136,02Q IDP - Detail Design,,,,0,0,0,0,40,0,0,0,,2006-06-14 08:00,2006-06-20 17:00,2007-05-26 08:01,2007-05-26 08:01,,2007-01-27 00:00,2007-01-27 00:00,,,2006-06-14 08:00,2006-06-20 17:00,,,,,PT_Normal,,,,,y3YdJHuYQsqXkY8u0GhVPg,uVMNvZXLOUWLFPKiIdW+/h,,,N,0,0,,,2007-02-01 02:42,2007-02-04 01:05,hbe4678,hbe4678,,,0
1374,12457555,14517,6815981,13331,1,100,N,N,N,CP_Units,TT_Task,DT_FixedDUR2,RV_OK,TK_Complete,EM02YPI124,02Y IDP - Plant Layout,,,,0,0,0,0,16,0,0,0,,2006-01-30 00:00,2006-01-31 00:00,2006-12-25 08:00,2006-12-25 08:00,,2007-01-27 00:00,2007-01-27 00:00,,,2006-02-27 08:00,2006-02-28 17:00,,,,,PT_Normal,,,,,q20kg92ZSWKct3w+ZLtgiw,xyAwAYXIskWVMUaBb6SnjB,,,N,0,0,,,2007-02-01 02:42,2007-02-04 01:05,hbe4678,hbe4678,,,0
1375,12457556,14517,6815981,13331,1,100,N,N,N,CP_Units,TT_Task,DT_FixedDUR2,RV_OK,TK_Complete,EM02YPI136,02Y IDP - Detail Design,,,,0,0,0,0,16,0,0,0,,2006-06-28 00:00,2006-06-28 00:00,2006-12-25 08:00,2006-12-25 08:00,,2007-01-27 00:00,2007-01-27 00:00,,,2006-06-27 08:00,2006-06-28 17:00,,,,,PT_Normal,,,,,nqjJTwd8QLqOzPK1HTYFUg,uVMNvZXLOUWLFPKiIdW+/h,,,N,0,0,,,2007-02-01 02:42,2007-02-04 01:05,hbe4678,hbe4678,,,0
1376,12457557,14517,6815981,13331,1,100,N,N,N,CP_Units,TT_Task,DT_FixedDUR2,RV_OK,TK_Complete,EM02FPI133,02F IDP - Plant Layout,,,,0,0,0,0,16,0,0,0,,2006-01-26 00:00,2006-01-27 00:00,2007-05-05 08:01,2007-05-05 08:01,,2007-01-27 00:00,2007-01-27 00:00,,,2006-02-02 08:00,2006-02-03 17:00,,,,,PT_Normal,,,,,3/WoSA6+RdWrsGuStPriNg,xyAwAYXIskWVMUaBb6SnjB,,,N,0,0,,,2007-02-01 02:42,2007-02-04 01:05,hbe4678,hbe4678,,,0
1377,12457558,14517,6815981,13331,1,100,N,N,N,CP_Units,TT_Task,DT_FixedDUR2,RV_OK,TK_Complete,EM02FPI136,02F IDP - Detail Design,,,,0,0,0,0,40,0,0,0,,2006-06-30 00:00,2006-07-04 17:00,2007-05-05 08:01,2007-05-05 08:01,,2007-01-27 00:00,2007-01-27 00:00,,,2006-06-26 08:00,2006-06-30 17:00,,,,,PT_Normal,,,,,0O6tsQt0RMSdcclTzFRiEQ,uVMNvZXLOUWLFPKiIdW+/h,,,N,0,0,,,2007-02-01 02:42,2007-02-04 01:05,hbe4678,hbe4678,,,0
1378,12457559,14517,6815981,13331,1,100,N,N,N,CP_Units,TT_Task,DT_FixedDUR2,RV_OK,TK_Complete,EM02GPI133,02G IDP - Plant Layout,,,,0,0,0,0,16,0,0,0,,2006-07-17 08:00,2006-08-10 17:00,2007-05-07 08:00,2007-05-07 08:00,,2007-01-27 00:00,2007-01-27 00:00,,,2006-07-17 08:00,2006-07-18 17:00,,,,,PT_Normal,,,,,4B9KC1XGQpyY8/vRDyKXaA,xyAwAYXIskWVMUaBb6SnjB,,,N,0,0,,,2007-02-01 02:42,2007-02-04 01:05,hbe4678,hbe4678,,,0
1379,12457560,14517,6815981,13331,1,100,N,N,N,CP_Units,TT_Task,DT_FixedDUR2,RV_OK,TK_Complete,EM02GPI136,02G IDP - Detail Design,,,,0,0,0,0,40,0,0,0,,2006-10-02 00:00,2006-11-06 00:00,2007-06-07 08:01,2007-06-07 08:01,,2007-02-02 17:00,2007-02-02 17:00,,,2006-10-09 08:00,2006-10-13 17:00,,,,,PT_Normal,,,,,N5cNy6RpTO2KNQrxF+C4pQ,uVMNvZXLOUWLFPKiIdW+/h,,,N,0,0,,,2007-02-01 02:42,2007-02-04 01:05,hbe4678,hbe4678,,,0
1380,12457561,14517,6815981,13331,1,100,N,N,N,CP_Units,TT_Task,DT_FixedDUR2,RV_OK,TK_Complete,EM02HPI133,02H IDP - Plant Layout,,,,0,0,0,0,16,0,0,0,,2006-01-02 00:00,2006-01-06 00:00,2007-04-28 08:01,2007-04-28 08:01,,2007-01-27 00:00,2007-01-27 00:00,,,2006-02-02 08:00,2006-02-03 17:00,,,,,PT_Normal,,,,,eK2obWeET1mRdYKE8b+uSw,xyAwAYXIskWVMUaBb6SnjB,,,N,0,0,,,2007-02-01 02:42,2007-02-04 01:05,hbe4678,hbe4678,,,0
1381,12457562,14517,6815981,13331,1,100,N,N,N,CP_Units,TT_Task,DT_FixedDUR2,RV_OK,TK_Complete,EM02HPI136,02H IDP - Detail Design,,,,0,0,0,0,16,0,0,0,,2006-08-22 08:00,2006-09-28 00:00,2007-07-02 08:01,2007-07-02 08:01,,2007-01-27 00:00,2007-01-27 00:00,,,2006-08-22 08:00,2006-08-23 17:00,,,,,PT_Normal,,,,,MNJ1KcXqTuujhLSzWWMxNQ,uVMNvZXLOUWLFPKiIdW+/h,,,N,0,0,,,2007-02-01 02:42,2007-02-04 01:05,hbe4678,hbe4678,,,0
1382,12457563,14517,6815981,13331,1,100,N,N,N,CP_Units,TT_Task,DT_FixedDUR2,RV_OK,TK_Complete,EM02JPI133,02J IDP - Plant Layout,,,,0,0,0,0,16,0,0,0,,2006-02-06 00:00,2006-02-08 00:00,2007-05-07 08:00,2007-05-07 08:00,,2007-01-27 00:00,2007-01-27 00:00,,,2006-02-27 08:00,2006-02-28 17:00,,,,,PT_Normal,,,,,NgpaaNh2RCmNLwdfTGgyBw,xyAwAYXIskWVMUaBb6SnjB,,,N,0,0,,,2007-02-01 02:42,2007-02-04 01:05,hbe4678,hbe4678,,,0
1383,12457564,14517,6815981,13331,1,100,N,N,N,CP_Units,TT_Task,DT_FixedDUR2,RV_OK,TK_Complete,EM02JPI136,02J IDP - Detail Design,,,,0,0,0,0,16,0,0,0,,2006-07-05 08:00,2006-07-06 17:00,2007-07-31 08:01,2007-07-31 08:01,,2007-01-27 00:00,2007-01-27 00:00,,,2006-07-05 08:00,2006-07-06 17:00,,,,,PT_Normal,,,,,ebeKe0ymRy+LUF/4s4beqQ,uVMNvZXLOUWLFPKiIdW+/h,,,N,0,0,,,2007-02-01 02:42,2007-02-04 01:05,hbe4678,hbe4678,,,0
1384,12457565,14517,6815981,13331,1,100,N,N,N,CP_Units,TT_Task,DT_FixedDUR2,RV_OK,TK_Complete,EM02KPI133,02K IDP - Plant Layout,,,,0,0,0,0,16,0,0,0,,2006-01-12 00:00,2006-01-13 00:00,2007-05-20 08:01,2007-05-20 08:01,,2007-01-27 00:00,2007-01-27 00:00,,,2006-03-02 08:00,2006-03-03 17:00,,,,,PT_Normal,,,,,f7xPaNKeTVuwjZVYfy/ejA,xyAwAYXIskWVMUaBb6SnjB,,,N,0,0,,,2007-02-01 02:42,2007-02-04 01:05,hbe4678,hbe4678,,,0
1385,12457566,14517,6815981,13331,1,100,N,N,N,CP_Units,TT_Task,DT_FixedDUR2,RV_OK,TK_Complete,EM02KPI136,02K IDP - Detail Design,,,,0,0,0,0,40,0,0,0,,2006-08-21 08:00,2006-09-25 17:00,2007-06-18 08:00,2007-06-18 08:00,,2007-01-27 00:00,2007-01-27 00:00,,,2006-08-21 08:00,2006-08-25 17:00,,,,,PT_Normal,,,,,Xj2NF3IASxidmiREFknX8w,uVMNvZXLOUWLFPKiIdW+/h,,,N,0,0,,,2007-02-01 02:42,2007-02-04 01:05,hbe4678,hbe4678,,,0
1386,12457567,14517,6815981,13331,1,100,N,N,N,CP_Units,TT_Task,DT_FixedDUR2,RV_OK,TK_Complete,EM02LPI133,02L IDP - Plant Layout,,,,0,0,0,0,16,0,0,0,,2006-02-02 00:00,2006-02-06 00:00,2007-01-09 08:01,2007-01-09 08:01,,2007-01-27 00:00,2007-01-27 00:00,,,2006-02-27 08:00,2006-02-28 17:00,,,,,PT_Normal,,,,,WS/SQskfQAW6lY2yL1ohFg,xyAwAYXIskWVMUaBb6SnjB,,,N,0,0,,,2007-02-01 02:42,2007-02-04 01:05,hbe4678,hbe4678,,,0
1387,12457568,14517,6815981,13331,1,100,N,N,N,CP_Units,TT_Task,DT_FixedDUR2,RV_OK,TK_Complete,EM02LPI136,02L IDP - Detail Design,,,,0,0,0,0,40,0,0,0,,2006-07-24 08:00,2006-07-28 17:00,2007-01-09 08:01,2007-01-09 08:01,,2007-01-27 00:00,2007-01-27 00:00,,,2006-07-24 08:00,2006-07-28 17:00,,,,,PT_Normal,,,,,Ux78IntJS4qcGufT1ltCYw,uVMNvZXLOUWLFPKiIdW+/h,,,N,0,0,,,2007-02-01 02:42,2007-02-04 01:05,hbe4678,hbe4678,,,0
1388,12457569,14517,6815981,13331,1,100,N,N,N,CP_Units,TT_Task,DT_FixedDUR2,RV_OK,TK_Complete,EM02API133,02A IDP - Plant Layout,,,,0,0,0,0,16,0,0,0,,2006-01-26 00:00,2006-01-27 00:00,2007-05-07 08:00,2007-05-07 08:00,,2007-01-27 00:00,2007-01-27 00:00,,,2006-02-02 08:00,2006-02-03 17:00,,,,,PT_Normal,,,,,eS/Ah5DZTQCr8fnw0lgP5w,Gknh/2z/BEmeokw4Mxnolx,,,N,0,0,,,2007-02-01 02:42,2007-02-04 01:05,hbe4678,hbe4678,,,0
1389,12457570,14517,6815981,13331,1,100,N,N,N,CP_Units,TT_Task,DT_FixedDUR2,RV_OK,TK_Complete,EM02UPIFWB,02U IDP - Plant Layout   - Firewater,,,,0,0,0,0,40,0,0,0,,2005-11-01 00:00,2005-11-11 00:00,2006-12-25 08:00,2006-12-25 08:00,,2007-01-27 00:00,2007-01-27 00:00,,,2005-11-21 08:00,2005-11-25 17:00,,,,,PT_Normal,,,,,JLOX2YoPQ7imYjPpevhKNA,ApeoIOK8RU+X28tjjLnY+B,,,N,0,0,,,2007-02-01 02:42,2007-02-04 01:05,hbe4678,hbe4678,,,0
1390,12457571,14517,6815981,13331,1,100,N,N,N,CP_Units,TT_Task,DT_FixedDUR2,RV_OK,TK_Complete,EM02UPICWC,02U Model Review Mtg (HOC/MEC) - Cooling Water,,,,0,0,0,0,40,0,0,0,,2005-11-28 00:00,2005-12-02 17:00,2006-12-25 08:00,2006-12-25 08:00,,2007-01-27 00:00,2007-01-27 00:00,,,2005-11-14 08:00,2005-11-18 17:00,,,,,PT_Normal,,,,,gX+htfPST32KPBU69dmFZQ,eMPi1EGQK0uP1wGOzmS3iR,,,N,0,0,,,2007-02-01 02:42,2007-02-04 01:05,hbe4678,hbe4678,,,0
1391,12457572,14517,6815981,13331,1,100,N,N,N,CP_Units,TT_Task,DT_FixedDUR2,RV_OK,TK_Complete,EM02UPICWD,02U Planning Release - Cooling Water,,,,0,0,0,0,40,0,0,0,,2005-12-08 00:00,2006-01-09 00:00,2006-12-25 08:00,2006-12-25 08:00,,2007-01-27 00:00,2007-01-27 00:00,,,2005-12-13 08:00,2005-12-19 17:00,,,,,PT_Normal,,,,,HQAy1q6bSMWODOwsBslh/Q,ebeNXwtjOUa5AnBnincmox,,,N,0,0,,,2007-02-01 02:42,2007-02-04 01:05,hbe4678,hbe4678,,,0
1392,12457573,14517,6815981,13331,1,100,N,N,N,CP_Units,TT_Task,DT_FixedDUR2,RV_OK,TK_Complete,EM02UPICWG,02U U/G Plan Dwgs Issue IFC,,,,0,0,0,0,176,0,0,0,,2006-03-17 00:00,2006-05-30 17:00,2007-04-19 08:00,2007-04-19 08:00,,2007-01-27 00:00,2007-01-27 00:00,,,2006-03-27 08:00,2006-04-27 17:00,,,,,PT_Normal,,,,,SjhaXA7eQZ2YPw1Hkh+MsQ,RybCXZLpmkKMhEj0L7iSAh,,,N,0,0,,,2007-02-01 02:42,2007-02-04 01:05,hbe4678,hbe4678,,,0
1393,12457574,14517,6815981,13331,1,100,N,N,N,CP_Units,TT_Task,DT_FixedDUR2,RV_OK,TK_Complete,EM02UPICWB,02U IDP - Plant Layout   - Cooling Water,,,,0,0,0,0,40,0,0,0,,2005-11-01 00:00,2005-11-11 00:00,2006-12-25 08:00,2006-12-25 08:00,,2007-01-27 00:00,2007-01-27 00:00,,,2005-11-21 08:00,2005-11-25 17:00,,,,,PT_Normal,,,,,VnMSLlFbTFqHV08eDozdYg,dKi+PuDOlEqKk05soAAXSB,,,N,0,0,,,2007-02-01 02:42,2007-02-04 01:05,hbe4678,hbe4678,,,0
1394,12457575,14517,6815981,13331,1,100,N,N,N,CP_Units,TT_Task,DT_FixedDUR2,RV_OK,TK_Complete,EM02UPIPSD,02U Planning Release - Process Water Sewer,,,,0,0,0,0,40,0,0,0,,2005-12-08 00:00,2006-01-09 00:00,2006-12-25 08:00,2006-12-25 08:00,,2007-01-27 00:00,2007-01-27 00:00,,,2005-12-13 08:00,2005-12-19 17:00,,,,,PT_Normal,,,,,TUPKra0gTaS6myBhIZCwnQ,1m8awc/mdUS9ID4ALCJm5x,,,N,0,0,,,2007-02-01 02:42,2007-02-04 01:05,hbe4678,hbe4678,,,0
1395,12457576,14517,6815981,13331,1,100,N,N,N,CP_Units,TT_Task,DT_FixedDUR2,RV_OK,TK_Complete,EM02UPIPSB,02U IDP - Plant Layout   - Process Water Sewer,,,,0,0,0,0,40,0,0,0,,2005-11-01 00:00,2005-11-11 00:00,2006-12-25 08:00,2006-12-25 08:00,,2007-01-27 00:00,2007-01-27 00:00,,,2005-11-14 08:00,2005-11-18 17:00,,,,,PT_Normal,,,,,ixeX/ibgSCaPMnXDrmniNg,WjMuBfEPAEifZp/S8WW1Ih,,,N,0,0,,,2007-02-01 02:42,2007-02-04 01:05,hbe4678,hbe4678,,,0
1396,12457577,14517,6815981,13331,1,100,N,N,N,CP_Units,TT_Task,DT_FixedDUR2,RV_OK,TK_Complete,EM02UPIOHC,02U Model Review Mtg (HOC/MEC) - Hot Outfall Sewer,,,,0,0,0,0,40,0,0,0,,2005-11-28 00:00,2005-12-01 00:00,2006-12-25 08:00,2006-12-25 08:00,,2007-01-27 00:00,2007-01-27 00:00,,,2005-11-14 08:00,2005-11-18 17:00,,,,,PT_Normal,,,,,xW0e+2+LT4aIdQ2anHpQJg,WEF9LsIIAU64652+t4b4qR,,,N,0,0,,,2007-02-01 02:42,2007-02-04 01:05,hbe4678,hbe4678,,,0
1397,12457578,14517,6815981,13331,1,100,N,N,N,CP_Units,TT_Task,DT_FixedDUR2,RV_OK,TK_Complete,EM02UPIOHD,02U Planning Release - Hot Outfall Sewer,,,,0,0,0,0,40,0,0,0,,2005-12-08 00:00,2006-01-09 00:00,2006-12-25 08:00,2006-12-25 08:00,,2007-01-27 00:00,2007-01-27 00:00,,,2005-12-13 08:00,2005-12-19 17:00,,,,,PT_Normal,,,,,oxZGJ35/Q9mu3DASWeJa1Q,OOoXvqp/o06/BV8J26zo+B,,,N,0,0,,,2007-02-01 02:42,2007-02-04 01:05,hbe4678,hbe4678,,,0
1398,12457579,14517,6815981,13331,1,100,N,N,N,CP_Units,TT_Task,DT_FixedDUR2,RV_OK,TK_Complete,EM02UPIOHB,02U IDP - Plant Layout   - Hot Outfall Sewer,,,,0,0,0,0,40,0,0,0,,2005-11-01 00:00,2005-11-11 00:00,2006-12-25 08:00,2006-12-25 08:00,,2007-01-27 00:00,2007-01-27 00:00,,,2005-11-21 08:00,2005-11-25 17:00,,,,,PT_Normal,,,,,SfsQGzq3Tr+EClDgna2SpQ,xspLWLfx/ESw1i82GavVZh,,,N,0,0,,,2007-02-01 02:42,2007-02-04 01:05,hbe4678,hbe4678,,,0
1399,12457580,14517,6815981,13331,1,100,N,N,N,CP_Units,TT_Task,DT_FixedDUR2,RV_OK,TK_Complete,EM02UPIOWC,02U Model Review Mtg (HOC/MEC) - Oily Water Sewer,,,,0,0,0,0,40,0,0,0,,2005-11-28 08:00,2005-12-01 00:00,2006-12-25 08:00,2006-12-25 08:00,,2007-01-27 00:00,2007-01-27 00:00,,,2005-11-28 08:00,2005-12-02 17:00,,,,,PT_Normal,,,,,4sbRe3ebSP+nfo6D6Xw11w,dxdcWt8qE0aMqysFwXckCx,,,N,0,0,,,2007-02-01 02:42,2007-02-04 01:05,hbe4678,hbe4678,,,0
1400,12457581,14517,6815981,13331,1,100,N,N,N,CP_Units,TT_Task,DT_FixedDUR2,RV_OK,TK_Complete,EM02UPIOWD,02U Planning Release - Oily Water Sewer,,,,0,0,0,0,40,0,0,0,,2005-12-08 08:00,2006-01-09 17:00,2006-12-25 08:00,2006-12-25 08:00,,2007-01-27 00:00,2007-01-27 00:00,,,2005-12-08 08:00,2005-12-15 17:00,,,,,PT_Normal,,,,,W5MtMuAGS9i7r/YtVVjlmg,11gYEBUjdkOn/jJSfyNMyR,,,N,0,0,,,2007-02-01 02:42,2007-02-04 01:05,hbe4678,hbe4678,,,0
1401,12457582,14517,6815981,13331,1,100,N,N,N,CP_Units,TT_Task,DT_FixedDUR2,RV_OK,TK_Complete,EM02UPIOWF,02U IDP - Detail Design   - Oily Water Sewer,,,,0,0,0,0,40,0,0,0,,2006-03-13 08:00,2006-03-17 17:00,2006-12-25 08:00,2006-12-25 08:00,,2007-01-27 00:00,2007-01-27 00:00,,,2006-03-13 08:00,2006-03-17 17:00,,,,,PT_Normal,,,,,RMUEE2UvS7Wqz5md03WSww,KXO05jkMVUmGaCg23xAsKh,,,N,0,0,,,2007-02-01 02:42,2007-02-04 01:05,hbe4678,hbe4678,,,0
1402,12457583,14517,6815981,13331,1,100,N,N,N,CP_Units,TT_Task,DT_FixedDUR2,RV_OK,TK_Complete,EM02UPIOWG,"02U Iso Issue IFC   - Other HDPE Piping (OW, PW & CW)",,,,0,0,0,0,176,0,0,0,,2006-03-17 00:00,2006-04-17 17:00,2007-04-19 08:00,2007-04-19 08:00,,2007-01-27 00:00,2007-01-27 00:00,,,2006-03-27 08:00,2006-04-27 17:00,,,,,PT_Normal,,,,,ThErz0RaRmmHnNrozmqz+A,ws/CJCuGGEOLwYhuySZOZh,,,N,0,0,,,2007-02-01 02:42,2007-02-04 01:05,hbe4678,hbe4678,,,0
1403,12457584,14517,6815981,13331,1,100,N,N,N,CP_Units,TT_Task,DT_FixedDUR2,RV_OK,TK_Complete,EM02UPIOWB,02U IDP - Plant Layout   - Oily Water Sewer,,,,0,0,0,0,40,0,0,0,,2005-11-01 00:00,2005-11-11 00:00,2006-12-25 08:00,2006-12-25 08:00,,2007-01-27 00:00,2007-01-27 00:00,,,2005-11-21 08:00,2005-11-25 17:00,,,,,PT_Normal,,,,,hyzUX8c4QTOQnWeTqT9hrw,+5+0rWtbTEqVwNm82zrwqx,,,N,0,0,,,2007-02-01 02:42,2007-02-04 01:05,hbe4678,hbe4678,,,0
1404,12457585,14517,6815981,13331,1,100,N,N,N,CP_Units,TT_Task,DT_FixedDUR2,RV_OK,TK_Complete,EM02UPIPSC,02U Model Review Mtg (HOC/MEC) - Process Water Sewer,,,,0,0,0,0,40,0,0,0,,2005-11-10 00:00,2005-11-16 00:00,2006-12-25 08:00,2006-12-25 08:00,,2007-01-27 00:00,2007-01-27 00:00,,,2005-11-15 08:00,2005-11-21 17:00,,,,,PT_Normal,,,,,W5yWsatJRuCHAYVo3xYKuQ,N7/zpNtYG06tuJQxlw+YWh,,,N,0,0,,,2007-02-01 02:42,2007-02-04 01:05,hbe4678,hbe4678,,,0
1405,12457586,14517,6815981,13331,1,100,N,N,N,CP_Units,TT_Task,DT_FixedDUR2,RV_OK,TK_Complete,EM02UPICBB,02U IDP - Plant Layout   - Benfield Sewer,,,,0,0,0,0,40,0,0,0,,2005-11-01 00:00,2005-11-11 00:00,2006-12-25 08:00,2006-12-25 08:00,,2007-01-27 00:00,2007-01-27 00:00,,,2005-11-14 08:00,2005-11-18 17:00,,,,,PT_Normal,,,,,oM05FFMaTMmpKx7CPBCDmQ,Oqj6Zd4hGUO2puVz1BYOFh,,,N,0,0,,,2007-02-01 02:42,2007-02-04 01:05,hbe4678,hbe4678,,,0
1406,12457587,14517,6815981,13331,1,100,N,N,N,CP_Units,TT_Task,DT_FixedDUR2,RV_OK,TK_Complete,EM02UPICBC,02U Model Review Mtg (HOC/MEC) - Benfield Sewer,,,,0,0,0,0,40,0,0,0,,2005-11-10 00:00,2005-11-16 00:00,2006-12-25 08:00,2006-12-25 08:00,,2007-01-27 00:00,2007-01-27 00:00,,,2005-11-15 08:00,2005-11-21 17:00,,,,,PT_Normal,,,,,vq/J1SSaS1i7K07EuUaHpw,TwTG3Yn9W0qBO6G0Bs7Trh,,,N,0,0,,,2007-02-01 02:42,2007-02-04 01:05,hbe4678,hbe4678,,,0
1407,12457588,14517,6815981,13331,1,100,N,N,N,CP_Units,TT_Task,DT_FixedDUR2,RV_OK,TK_Complete,EM02UPICBD,02U Planning Release - Benfield Sewer,,,,0,0,0,0,40,0,0,0,,2005-12-08 00:00,2006-01-09 00:00,2006-12-25 08:00,2006-12-25 08:00,,2007-01-27 00:00,2007-01-27 00:00,,,2005-12-13 08:00,2005-12-19 17:00,,,,,PT_Normal,,,,,RHDoxHYeTO+ovdEOdOkJzw,n2zDDO1bgEWWvjkZaj8RXx,,,N,0,0,,,2007-02-01 02:42,2007-02-04 01:05,hbe4678,hbe4678,,,0
1408,12457589,14517,6815981,13331,1,100,N,N,N,CP_Units,TT_Task,DT_FixedDUR2,RV_OK,TK_Complete,EM02UPICBF,02U IDP - Detail Design   - Benfield Sewer,,,,0,0,0,0,40,0,0,0,,2006-03-13 08:00,2006-03-17 17:00,2006-12-25 08:00,2006-12-25 08:00,,2007-01-27 00:00,2007-01-27 00:00,,,2006-03-13 08:00,2006-03-17 17:00,,,,,PT_Normal,,,,,1DyhKZqXSs2PQMyh7kn1EA,f0NOHJjDEEy/8rW+aLw9Vx,,,N,0,0,,,2007-02-01 02:42,2007-02-04 01:05,hbe4678,hbe4678,,,0
1409,12457590,14517,6815981,13331,1,100,N,N,N,CP_Units,TT_Task,DT_FixedDUR2,RV_OK,TK_Complete,EM02UPICBG,02U Iso Issue IFC   - Metalic Piping (BS & OS),,,,0,0,0,0,176,0,0,0,,2006-03-17 00:00,2006-05-11 17:00,2007-04-19 08:00,2007-04-19 08:00,,2007-01-27 00:00,2007-01-27 00:00,,,2006-03-27 08:00,2006-04-27 17:00,,,,,PT_Normal,,,,,J+qYGVB9QMSgR+tYtl/Itg,iT00x1ctkEK2VjmWu4PsmB,,,N,0,0,,,2007-02-01 02:42,2007-02-04 01:05,hbe4678,hbe4678,,,0
1410,12457591,14517,6815981,13331,1,100,N,N,N,CP_Units,TT_Task,DT_FixedDUR2,RV_OK,TK_Complete,EM02YPI132,02Y Planning Release,,,,0,0,0,0,8,0,0,0,,2006-02-06 00:00,2006-02-10 00:00,2006-12-25 08:00,2006-12-25 08:00,,2007-01-27 00:00,2007-01-27 00:00,,,2006-03-06 08:00,2006-03-06 17:00,,,,,PT_Normal,,,,,9/C7zMv8St+rRyonROa6WA,jtv87dMzHU6kf5g3GpcSZB,,,N,0,0,,,2007-02-01 02:42,2007-02-04 01:05,hbe4678,hbe4678,,,0
1411,12457592,14517,6815981,13331,1,100,N,N,N,CP_Units,TT_Task,DT_FixedDUR2,RV_OK,TK_Complete,EM02YPI134,02Y Detail Model Development,,,,0,0,0,0,320,0,0,0,,2006-02-27 08:00,2006-06-05 00:00,2006-12-25 08:00,2006-12-25 08:00,,2007-01-27 00:00,2007-01-27 00:00,,,2006-02-27 08:00,2006-04-26 17:00,,,,,PT_Normal,,,,,bzoD7Xo6QZ6bIx2n/XNqSA,7JQ/Ibth6E+PSiKgisMYTh,,,N,0,0,,,2007-02-01 02:42,2007-02-04 01:05,hbe4678,hbe4678,,,0
1412,12457593,14517,6815981,13331,1,100,N,N,N,CP_Units,TT_Task,DT_FixedDUR2,RV_OK,TK_Complete,EM02YPI135,02Y A/G Piping Iso's - Issue IFC,,,,0,0,0,0,376,0,0,0,,2006-07-04 00:00,2006-10-04 17:00,2007-02-27 08:00,2007-02-27 08:00,,2007-01-27 00:00,2007-01-27 00:00,,,2006-07-03 08:00,2006-09-05 17:00,,,,,PT_Normal,,,,,oi2tgLK8S9+APdg/sHiLgw,SMpH1WXuQEm1DfoYhuauQx,,,N,0,0,,,2007-02-01 02:42,2007-02-04 01:05,hbe4678,hbe4678,,,0
1413,12457594,14517,6815981,13331,1,100,N,N,N,CP_Units,TT_Task,DT_FixedDUR2,RV_OK,TK_Complete,EM02YPI138,02Y Design / Issue Pipe Supports IFC,,,,0,0,0,0,360,0,0,0,,2006-07-04 16:59,2006-09-30 00:00,2007-04-02 08:00,2007-04-02 08:00,,2007-01-27 00:00,2007-01-27 00:00,,,2006-07-04 16:59,2006-09-05 16:59,,,,,PT_Normal,,,,,Xwdrup3YS9K1c+qolM3eNA,+srZcKzqb0G0zdsTR7Gfnx,,,N,0,0,,,2007-02-01 02:42,2007-02-04 01:05,hbe4678,hbe4678,,,0
1414,12457595,14517,6815981,13331,1,100,N,N,N,CP_Units,TT_Task,DT_FixedDUR2,RV_OK,TK_Complete,EM02CPI123,02C Plant Layout Nozzle Release,,,,0,0,0,0,56,0,0,0,,2005-09-26 08:00,2005-10-21 00:00,2007-05-03 08:01,2007-05-03 08:01,,2007-01-27 00:00,2007-01-27 00:00,,,2005-09-26 08:00,2005-10-04 17:00,,,,,PT_Normal,,,,,ngo0VH/KSEyk/yJ+so6X+A,wFS3netJ3k6E6xrcWJHoch,,,N,0,0,,,2007-02-01 02:42,2007-02-04 01:05,hbe4678,hbe4678,,,0
1415,12457596,14517,6815981,13331,1,100,N,N,N,CP_Units,TT_Task,DT_FixedDUR2,RV_OK,TK_Complete,EM02CPI130,02C Model Review Mtg,,,,0,0,0,0,24,0,0,0,,2006-01-05 00:00,2006-01-06 00:00,2007-05-03 08:01,2007-05-03 08:01,,2007-01-27 00:00,2007-01-27 00:00,,,2006-02-06 08:01,2006-02-09 08:01,,,,,PT_Normal,,,,,9zaIyxWfQWG31dR+WRYrtA,9qGQE1jRMkmVSt1uJXqj8h,,,N,0,0,,,2007-02-01 02:42,2007-02-04 01:05,hbe4678,hbe4678,,,0
1416,12457597,14517,6815981,13331,1,100,N,N,N,CP_Units,TT_Task,DT_FixedDUR2,RV_OK,TK_Complete,EM02CPI132,02C Planning Release,,,,0,0,0,0,8,0,0,0,,2006-03-13 08:00,2006-03-13 17:00,2007-05-03 08:01,2007-05-03 08:01,,2007-01-27 00:00,2007-01-27 00:00,,,2006-03-13 08:00,2006-03-13 17:00,,,,,PT_Normal,,,,,mJLJrHthT3CQ8QTX/xlQTA,n2TQS8+de0Gn5P2Kko3LRh,,,N,0,0,,,2007-02-01 02:42,2007-02-04 01:05,hbe4678,hbe4678,,,0
1417,12457598,14517,6815981,13331,1,100,N,N,N,CP_Units,TT_Task,DT_FixedDUR2,RV_OK,TK_Complete,EM02CPI134,02C Detail Model Development,,,,0,0,0,0,560,0,0,0,,2006-03-22 08:00,2006-07-03 00:00,2007-05-03 08:01,2007-05-03 08:01,,2007-01-27 00:00,2007-01-27 00:00,,,2006-03-22 08:00,2006-06-30 17:00,,,,,PT_Normal,,,,,bXqxMBZGTp+Fqx/gpSbg/g,sMqM3yF3+0CrGK8Ohpq/ah,,,N,0,0,,,2007-02-01 02:42,2007-02-04 01:05,hbe4678,hbe4678,,,0
1418,12457599,14517,6815981,13331,1,100,N,N,N,CP_Units,TT_Task,DT_FixedDUR2,RV_OK,TK_Complete,EM02CPI135,02C A/G Piping Iso's - Issue IFC,,,,0,0,0,0,360,0,0,0,,2006-08-14 00:00,2007-01-15 00:00,2007-05-03 08:01,2007-05-03 08:01,,2007-01-27 00:00,2007-01-27 00:00,,,2006-08-21 08:00,2006-10-20 17:00,,,,,PT_Normal,,,,,nyHw+G3sQVaKHQDOm33+iw,YGDFUUmznUqOk6gvti9Onx,,,N,0,0,,,2007-02-01 02:42,2007-02-04 01:05,hbe4678,hbe4678,,,0
1419,12457600,14517,6815981,13331,1,100,N,N,N,CP_Units,TT_Task,DT_FixedDUR2,RV_OK,TK_Complete,EM02CPI138,02C Design / Issue Pipe Supports IFC,,,,0,0,0,0,360,0,0,0,,2006-08-14 08:00,2007-01-15 17:00,2007-08-14 08:01,2007-08-14 08:01,,2007-01-27 00:00,2007-01-27 00:00,,,2006-08-14 08:00,2006-10-13 17:00,,,,,PT_Normal,,,,,lu6a8AFIQaqcEx046zjGmg,mWGIMmSHdkmqP7nlO76g2B,,,N,0,0,,,2007-02-01 02:42,2007-02-04 01:05,hbe4678,hbe4678,,,0
1420,12457601,14517,6815981,13331,1,100,N,N,N,CP_Units,TT_Task,DT_FixedDUR2,RV_OK,TK_Complete,EM02CPI120,02C Plant Layout Model,,,,0,0,0,0,600,0,0,0,,2005-08-15 00:00,2005-12-16 17:00,2007-05-03 08:01,2007-05-03 08:01,,2007-01-27 00:00,2007-01-27 00:00,,,2005-08-19 08:00,2005-12-05 17:00,,,,,PT_Normal,,,,,p0nkzceFQKezv6Q7LWGeqQ,/EAGNvvB1USewhheVzHWGh,,,N,0,0,,,2007-02-01 02:42,2007-02-04 01:05,hbe4678,hbe4678,,,0
1421,12457602,14517,6815981,13331,1,100,N,N,N,CP_Units,TT_Task,DT_FixedDUR2,RV_OK,TK_Complete,EM02HPI120,02H Plant Layout Model,,,,0,0,0,0,960,0,0,0,,2005-05-11 00:00,2005-12-12 17:00,2007-04-28 08:01,2007-04-28 08:01,,2007-01-27 00:00,2007-01-27 00:00,,,2005-07-29 08:00,2006-01-24 17:00,,,,,PT_Normal,,,,,2IlwWpesTFyqeS1c2ygTnA,CmrMW8jTTUq+bpQUpI6Grh,,,N,0,0,,,2007-02-01 02:42,2007-02-04 01:05,hbe4678,hbe4678,,,0
1422,12457603,14517,6815981,13331,1,100,N,N,N,CP_Units,TT_Task,DT_FixedDUR2,RV_OK,TK_Complete,EM02HPI123,02H Plant Layout Nozzle Release,,,,0,0,0,0,448,0,0,0,,2005-08-08 08:00,2005-10-24 17:00,2007-04-28 08:01,2007-04-28 08:01,,2007-01-27 00:00,2007-01-27 00:00,,,2005-08-08 08:00,2005-10-25 17:00,,,,,PT_Normal,,,,,gfPCEkfRQXOE1/N3a3ae7g,0T+r63rdK0a1jlUozx75oh,,,N,0,0,,,2007-02-01 02:42,2007-02-04 01:05,hbe4678,hbe4678,,,0
1423,12457604,14517,6815981,13331,1,100,N,N,N,CP_Units,TT_Task,DT_FixedDUR2,RV_OK,TK_Complete,EM02HPI130,02H Model Review Mtg,,,,0,0,0,0,56,0,0,0,,2005-12-15 00:00,2005-12-19 17:00,2007-04-28 08:01,2007-04-28 08:01,,2007-01-27 00:00,2007-01-27 00:00,,,2005-12-13 08:00,2005-12-21 17:00,,,,,PT_Normal,,,,,dGL7rvg/So+psikm7cUiRQ,+zOOIwBQMUSeIlZDqYT+Bx,,,N,0,0,,,2007-02-01 02:42,2007-02-04 01:05,hbe4678,hbe4678,,,0
1424,12457605,14517,6815981,13331,1,100,N,N,N,CP_Units,TT_Task,DT_FixedDUR2,RV_OK,TK_Complete,EM02HPI132,02H Planning Release,,,,0,0,0,0,8,0,0,0,,2006-02-17 08:00,2006-02-17 17:00,2007-04-28 08:01,2007-04-28 08:01,,2007-01-27 00:00,2007-01-27 00:00,,,2006-02-17 08:00,2006-02-17 17:00,,,,,PT_Normal,,,,,rdzKm0F/RHu7nm5P2kW5Wg,KoFhSkIwek6/AZb4/wtxNh,,,N,0,0,,,2007-02-01 02:42,2007-02-04 01:05,hbe4678,hbe4678,,,0
1425,12457606,14517,6815981,13331,1,100,N,N,N,CP_Units,TT_Task,DT_FixedDUR2,RV_OK,TK_Complete,EM02HPI134,02H Detail Model Development,,,,0,0,0,0,440,0,0,0,,2006-04-06 08:00,2006-07-10 17:00,2007-07-02 08:01,2007-07-02 08:01,,2007-01-27 00:00,2007-01-27 00:00,,,2006-04-06 08:00,2006-06-26 17:00,,,,,PT_Normal,,,,,MSBMOVgpTjKOkAAeJHopug,QgaDnfZxVUGLsRN4xIlTgR,,,N,0,0,,,2007-02-01 02:42,2007-02-04 01:05,hbe4678,hbe4678,,,0
1426,12457607,14517,6815981,13331,1,100,N,N,N,CP_Units,TT_Task,DT_FixedDUR2,RV_OK,TK_Complete,EM02HPI135,02H A/G Piping Iso's - Issue IFC,,,,0,0,0,0,480,0,0,0,,2006-08-14 00:00,2006-12-22 17:00,2007-07-02 08:01,2007-07-02 08:01,,2007-01-27 00:00,2007-01-27 00:00,,,2006-08-22 08:00,2006-11-14 17:00,,,,,PT_Normal,,,,,cEDglgQDRk2Z3tWoUfmP5A,tNjZYGq8oUKr2IGJFl3tWR,,,N,0,0,,,2007-02-01 02:42,2007-02-04 01:05,hbe4678,hbe4678,,,0
1427,12457608,14517,6815981,13331,1,100,N,N,N,CP_Units,TT_Task,DT_FixedDUR2,RV_OK,TK_Complete,EM02HPI138,02H Design / Issue Pipe Supports IFC,,,,0,0,0,0,360,0,0,0,,2006-08-14 00:00,2006-12-22 17:00,2007-08-29 08:01,2007-08-29 08:01,,2007-01-27 00:00,2007-01-27 00:00,,,2006-08-22 08:00,2006-10-23 17:00,,,,,PT_Normal,,,,,90vlaVX3ThSH0nbzvgn+Vg,PelqmbUYP06joRysid1Zbx,,,N,0,0,,,2007-02-01 02:42,2007-02-04 01:05,hbe4678,hbe4678,,,0
1428,12457609,14517,6815981,13330,1,100,N,N,N,CP_Units,TT_Task,DT_FixedDUR2,RV_OK,TK_Complete,EK02UPIFWC,02U Model Review Mtg (HOC/MEC) - Firewater,,,,0,0,0,0,40,0,0,0,,2005-11-28 00:00,2005-12-02 17:00,2006-12-25 08:00,2006-12-25 08:00,,2007-01-27 00:00,2007-01-27 00:00,,,2005-11-14 08:00,2005-11-18 17:00,,,,,PT_Normal,,,,,jjGtrXFeTY6A91NNzCakfQ,+t17HU7V8E+CAyljCcKFkB,,,N,0,0,,,2007-02-01 02:42,2007-02-04 01:05,hbe4678,hbe4678,,,0
1429,12457610,14517,6815981,13331,1,100,N,N,N,CP_Units,TT_Task,DT_FixedDUR2,RV_OK,TK_Complete,EM02UPIFWD,02U Planning Release - Firewater,,,,0,0,0,0,40,0,0,0,,2005-12-08 00:00,2006-01-09 00:00,2006-12-25 08:00,2006-12-25 08:00,,2007-01-27 00:00,2007-01-27 00:00,,,2005-12-13 08:00,2005-12-19 17:00,,,,,PT_Normal,,,,,JZJX3dJJTlONdRdbgeQjZg,EFR0t5Vx30a7974woGjIgR,,,N,0,0,,,2007-02-01 02:42,2007-02-04 01:05,hbe4678,hbe4678,,,0
1430,12457611,14517,6815981,13331,1,100,N,N,N,CP_Units,TT_Task,DT_FixedDUR2,RV_OK,TK_Complete,EM02UPIFWF,02U IDP - Detail Design   - Firewater,,,,0,0,0,0,40,0,0,0,,2006-03-13 08:00,2006-03-17 17:00,2006-12-25 08:00,2006-12-25 08:00,,2007-01-27 00:00,2007-01-27 00:00,,,2006-03-13 08:00,2006-03-17 17:00,,,,,PT_Normal,,,,,lb/fL4WGRj2KRtPFZB9F6g,1iK13W2G/0mLMjMJbHpJZh,,,N,0,0,,,2007-02-01 02:42,2007-02-04 01:05,hbe4678,hbe4678,,,0
1431,12457612,14517,6815981,13331,1,100,N,N,N,CP_Units,TT_Task,DT_FixedDUR2,RV_OK,TK_Complete,EM02UPIFWG,02U Iso Issue IFC   - HDPE Piping (FW),,,,0,0,0,0,176,0,0,0,,2006-03-17 00:00,2006-03-31 17:00,2007-04-19 08:00,2007-04-19 08:00,,2007-01-27 00:00,2007-01-27 00:00,,,2006-03-27 08:00,2006-04-27 17:00,,,,,PT_Normal,,,,,pilYwOgPT4W0BTkCglniZA,4Dfzx0mxCEyEEcRiap8bTh,,,N,0,0,,,2007-02-01 02:42,2007-02-04 01:05,hbe4678,hbe4678,,,0
1432,12457613,14517,6815981,13331,1,100,N,N,N,CP_Units,TT_Task,DT_FixedDUR2,RV_OK,TK_Complete,EM02NPI123,02N Plant Layout Nozzle Release,,,,0,0,0,0,40,0,0,0,,2005-07-19 08:00,2005-10-21 17:00,2007-05-07 08:00,2007-05-07 08:00,,2007-01-27 00:00,2007-01-27 00:00,,,2005-07-19 08:00,2005-07-25 17:00,,,,,PT_Normal,,,,,U9/FNMovTO+uGPGDAhT1pg,HjhnD5dbu0S83QnVmE5gsx,,,N,0,0,,,2007-02-01 02:42,2007-02-04 01:05,hbe4678,hbe4678,,,0
1433,12457614,14517,6815981,13331,1,100,N,N,N,CP_Units,TT_Task,DT_FixedDUR2,RV_OK,TK_Complete,EM02NPI130,02N Model Review Mtg,,,,0,0,0,0,16,0,0,0,,2006-01-16 00:00,2006-01-17 00:00,2007-05-07 08:00,2007-05-07 08:00,,2007-01-27 00:00,2007-01-27 00:00,,,2006-01-25 08:00,2006-01-26 17:00,,,,,PT_Normal,,,,,rWRm0gYqQRCvvtqTPGuFJw,aAApwdgvzkiMWaDxC7A/dx,,,N,0,0,,,2007-02-01 02:42,2007-02-04 01:05,hbe4678,hbe4678,,,0
1434,12457615,14517,6815981,13331,1,100,N,N,N,CP_Units,TT_Task,DT_FixedDUR2,RV_OK,TK_Complete,EM02NPI132,02N Planning Release,,,,0,0,0,0,8,0,0,0,,2006-03-02 08:00,2006-03-08 17:00,2007-05-07 08:00,2007-05-07 08:00,,2007-01-27 00:00,2007-01-27 00:00,,,2006-03-02 08:00,2006-03-02 17:00,,,,,PT_Normal,,,,,8BdFPFrGQiKtakHfzGeCIQ,fjRuqxjNhUiBnrKs9BL4vx,,,N,0,0,,,2007-02-01 02:42,2007-02-04 01:05,hbe4678,hbe4678,,,0
1435,12457616,14517,6815981,13331,1,100,N,N,N,CP_Units,TT_Task,DT_FixedDUR2,RV_OK,TK_Complete,EM02NPI134,02N Detail Model Development,,,,0,0,0,0,280,0,0,0,,2006-03-22 08:00,2006-05-12 00:00,2007-05-28 08:01,2007-05-28 08:01,,2007-01-27 00:00,2007-01-27 00:00,,,2006-03-22 08:00,2006-05-12 17:00,,,,,PT_Normal,,,,,Hat0sgGYS0eK8SqTq/Y86A,NNwrTyXcM06OshPP00Ndfh,,,N,0,0,,,2007-02-01 02:42,2007-02-04 01:05,hbe4678,hbe4678,,,0
1436,12457617,14517,6815981,13331,1,100,N,N,N,CP_Units,TT_Task,DT_FixedDUR2,RV_OK,TK_Complete,EM02NPI135,02N A/G Piping Iso's - Issue IFC,,,,0,0,0,0,80,0,0,0,,2006-06-19 08:00,2006-07-07 17:00,2007-05-28 08:01,2007-05-28 08:01,,2007-01-27 00:00,2007-01-27 00:00,,,2006-06-19 08:00,2006-06-30 17:00,,,,,PT_Normal,,,,,3IRryG9vTMWmlOGZimIXqQ,1QfPJBXLqEeLHfPO9pq+lh,,,N,0,0,,,2007-02-01 02:42,2007-02-04 01:05,hbe4678,hbe4678,,,0
1437,12457618,14517,6815981,13331,1,100,N,N,N,CP_Units,TT_Task,DT_FixedDUR2,RV_OK,TK_Complete,EM02NPI138,02N Design / Issue Pipe Supports IFC,,,,0,0,0,0,80,0,0,0,,2006-06-19 08:00,2006-07-07 17:00,2007-10-21 08:01,2007-10-21 08:01,,2007-01-27 00:00,2007-01-27 00:00,,,2006-06-19 08:00,2006-06-30 17:00,,,,,PT_Normal,,,,,xxGsx8h4TI2GLgZ9vFmhgw,J3fSwMTP3US/msMUZbpOXx,,,N,0,0,,,2007-02-01 02:42,2007-02-04 01:05,hbe4678,hbe4678,,,0
1438,12457619,14517,6815981,13331,1,100,N,N,N,CP_Units,TT_Task,DT_FixedDUR2,RV_OK,TK_Complete,EM02PPI120,02P Plant Layout Model,,,,0,0,0,0,480,0,0,0,,2005-10-17 08:00,2006-01-20 17:00,2007-05-03 08:01,2007-05-03 08:01,,2007-01-27 00:00,2007-01-27 00:00,,,2005-10-17 08:00,2006-01-17 17:00,,,,,PT_Normal,,,,,eJFH71DfQqaBXPpDXByHJQ,ZiK39Wpbq0KSCv8zOFiqkR,,,N,0,0,,,2007-02-01 02:42,2007-02-04 01:05,hbe4678,hbe4678,,,0
1439,12457620,14517,6815981,13331,1,100,N,N,N,CP_Units,TT_Task,DT_FixedDUR2,RV_OK,TK_Complete,EM02PPI123,02P Plant Layout Nozzle Release,,,,0,0,0,0,40,0,0,0,,2005-11-14 08:00,2005-11-18 17:00,2007-05-03 08:01,2007-05-03 08:01,,2007-01-27 00:00,2007-01-27 00:00,,,2005-11-14 08:00,2005-11-18 17:00,,,,,PT_Normal,,,,,zQTuGSDwQMe6BKBvATG/Og,ZB7OGHJD10+ofs9zCgGOVR,,,N,0,0,,,2007-02-01 02:42,2007-02-04 01:05,hbe4678,hbe4678,,,0
1440,12457621,14517,6815981,13331,1,100,N,N,N,CP_Units,TT_Task,DT_FixedDUR2,RV_OK,TK_Complete,EM02PPI130,02P Model Review Mtg,,,,0,0,0,0,8,0,0,0,,2006-01-16 00:00,2006-01-16 00:00,2007-05-03 08:01,2007-05-03 08:01,,2007-01-27 00:00,2007-01-27 00:00,,,2006-01-23 08:00,2006-01-23 17:00,,,,,PT_Normal,,,,,tTLcGakkQHaSp5z4RfTLXg,8hAMSUNTA0CD21p4qKAtYB,,,N,0,0,,,2007-02-01 02:42,2007-02-04 01:05,hbe4678,hbe4678,,,0
1441,12457622,14517,6815981,13331,1,100,N,N,N,CP_Units,TT_Task,DT_FixedDUR2,RV_OK,TK_Complete,EM02PPI132,02P Planning Release,,,,0,0,0,0,8,0,0,0,,2006-02-10 00:00,2006-02-10 00:00,2007-05-03 08:01,2007-05-03 08:01,,2007-01-27 00:00,2007-01-27 00:00,,,2006-03-10 08:00,2006-03-10 17:00,,,,,PT_Normal,,,,,b59MNsklQ/ONUL1lr2IKIg,LDPVP2PoHka89eiaa9qqpR,,,N,0,0,,,2007-02-01 02:42,2007-02-04 01:05,hbe4678,hbe4678,,,0
1442,12457623,14517,6815981,13331,1,100,N,N,N,CP_Units,TT_Task,DT_FixedDUR2,RV_OK,TK_Complete,EM02PPI134,02P Detail Model Development,,,,0,0,0,0,200,0,0,0,,2006-03-10 08:00,2006-04-20 17:00,2007-05-03 08:01,2007-05-03 08:01,,2007-01-27 00:00,2007-01-27 00:00,,,2006-03-10 08:00,2006-04-18 17:00,,,,,PT_Normal,,,,,h0JFSYeFRUKF0osBLlnI4A,b33nSUnS4kirOquhygrB0h,,,N,0,0,,,2007-02-01 02:42,2007-02-04 01:05,hbe4678,hbe4678,,,0
1443,12457624,14517,6815981,13331,1,100,N,N,N,CP_Units,TT_Task,DT_FixedDUR2,RV_OK,TK_Complete,EM02PPI135,02P A/G Piping Iso's - Issue IFC,,,,0,0,0,0,80,0,0,0,,2006-05-15 00:00,2006-05-16 00:00,2007-05-03 08:01,2007-05-03 08:01,,2007-01-27 00:00,2007-01-27 00:00,,,2006-05-16 08:00,2006-05-29 17:00,,,,,PT_Normal,,,,,aWEWRcJAQHSBav1fNmoH3Q,LYjWKVTTJ0qw0NjCjZoV6B,,,N,0,0,,,2007-02-01 02:42,2007-02-04 01:05,hbe4678,hbe4678,,,0
1444,12457625,14517,6815981,13331,1,100,N,N,N,CP_Units,TT_Task,DT_FixedDUR2,RV_OK,TK_Complete,EM02PPI138,02P Design / Issue Pipe Supports IFC,,,,0,0,0,0,80,0,0,0,,2006-05-15 00:00,2006-05-16 00:00,2007-12-31 08:01,2007-12-31 08:01,,2007-01-27 00:00,2007-01-27 00:00,,,2006-05-16 08:00,2006-05-29 17:00,,,,,PT_Normal,,,,,8CvkM1fvQXq3XyW1L/Eh5Q,WJY57oUEXUqpJ1MrYPUU8h,,,N,0,0,,,2007-02-01 02:42,2007-02-04 01:05,hbe4678,hbe4678,,,0
1445,12457626,14517,6815981,13331,1,100,N,N,N,CP_Units,TT_Task,DT_FixedDUR2,RV_OK,TK_Complete,EM02QPI120,02Q Plant Layout Model,,,,0,0,0,0,840,0,0,0,,2005-05-20 00:00,2005-12-19 17:00,2007-05-07 08:00,2007-05-07 08:00,,2007-01-27 00:00,2007-01-27 00:00,,,2005-08-23 08:00,2006-01-26 17:00,,,,,PT_Normal,,,,,Tq1mz1V6T+yJcD4WEkKkgQ,EPmEPo38IkKsrhglvGwjTB,,,N,0,0,,,2007-02-01 02:42,2007-02-04 01:05,hbe4678,hbe4678,,,0
1446,12457627,14517,6815981,13331,1,100,N,N,N,CP_Units,TT_Task,DT_FixedDUR2,RV_OK,TK_Complete,EM02QPI123,02Q Plant Layout Nozzle Release,,,,0,0,0,0,40,0,0,0,,2005-07-13 08:00,2005-10-21 17:00,2007-05-07 08:00,2007-05-07 08:00,,2007-01-27 00:00,2007-01-27 00:00,,,2005-07-13 08:00,2005-07-19 17:00,,,,,PT_Normal,,,,,u4adBwr9SV+kiIm1yjCh9A,qq0aKj2MK02tziBZ8mCXBh,,,N,0,0,,,2007-02-01 02:42,2007-02-04 01:05,hbe4678,hbe4678,,,0
1447,12457628,14517,6815981,13331,1,100,N,N,N,CP_Units,TT_Task,DT_FixedDUR2,RV_OK,TK_Complete,EM02QPI130,02Q Model Review Mtg,,,,0,0,0,0,8,0,0,0,,2006-01-17 00:00,2006-01-17 00:00,2007-05-07 08:00,2007-05-07 08:00,,2007-01-27 00:00,2007-01-27 00:00,,,2006-01-24 08:00,2006-01-24 17:00,,,,,PT_Normal,,,,,dJ+J6IyLRpyj71YFh4RGtg,UsKu+JMIbUa0vhBqPzay2x,,,N,0,0,,,2007-02-01 02:42,2007-02-04 01:05,hbe4678,hbe4678,,,0
1448,12457629,14517,6815981,13331,1,100,N,N,N,CP_Units,TT_Task,DT_FixedDUR2,RV_OK,TK_Complete,EM02QPI132,02Q Planning Release,,,,0,0,0,0,40,0,0,0,,2006-02-09 00:00,2006-02-15 00:00,2007-05-07 08:00,2007-05-07 08:00,,2007-01-27 00:00,2007-01-27 00:00,,,2006-03-09 08:00,2006-03-15 17:00,,,,,PT_Normal,,,,,7gmjuFDnQ4e5I52qISS+0g,FwFvva364kigB4ImZmhJFx,,,N,0,0,,,2007-02-01 02:42,2007-02-04 01:05,hbe4678,hbe4678,,,0
1449,12457630,14517,6815981,13331,1,100,N,N,N,CP_Units,TT_Task,DT_FixedDUR2,RV_OK,TK_Complete,EM02QPI134,02Q Detail Model Development,,,,0,0,0,0,160,0,0,0,,2006-02-16 00:00,2006-05-26 00:00,2007-05-26 08:01,2007-05-26 08:01,,2007-01-27 00:00,2007-01-27 00:00,,,2006-03-16 08:00,2006-04-17 17:00,,,,,PT_Normal,,,,,M0QFAvP1SmCHTv4rjX3kvw,FTDNg/HSC0ug5/ot6pAqSR,,,N,0,0,,,2007-02-01 02:42,2007-02-04 01:05,hbe4678,hbe4678,,,0
1450,12457631,14517,6815981,13331,1,100,N,N,N,CP_Units,TT_Task,DT_FixedDUR2,RV_OK,TK_Complete,EM02QPI135,02Q A/G Piping Iso's - Issue IFC,,,,0,0,0,0,120,0,0,0,,2006-06-22 00:00,2006-10-20 17:00,2007-05-26 08:01,2007-05-26 08:01,,2007-01-27 00:00,2007-01-27 00:00,,,2006-06-27 08:00,2006-07-17 17:00,,,,,PT_Normal,,,,,m98qUonLROK60GCf8G2Isg,vjIyuq+Vz0iNIHm5yQENOB,,,N,0,0,,,2007-02-01 02:42,2007-02-04 01:05,hbe4678,hbe4678,,,0
1451,12457632,14517,6815981,13331,1,100,N,N,N,CP_Units,TT_Task,DT_FixedDUR2,RV_OK,TK_Complete,EM02QPI138,02Q Design / Issue Pipe Supports IFC,,,,0,0,0,0,120,0,0,0,,2006-06-22 00:00,2006-10-20 17:00,2007-12-16 08:01,2007-12-16 08:01,,2007-01-27 00:00,2007-01-27 00:00,,,2006-06-27 08:00,2006-07-17 17:00,,,,,PT_Normal,,,,,lYGA6pk3SpCF4JsDxSuwYg,XHLd49fgH0+szOvl7ZX8qR,,,N,0,0,,,2007-02-01 02:42,2007-02-04 01:05,hbe4678,hbe4678,,,0
1452,12457633,14517,6815981,13331,1,100,N,N,N,CP_Units,TT_Task,DT_FixedDUR2,RV_OK,TK_Complete,EM02YPI121,02Y Plant Layout Model,,,,0,0,0,0,1040,0,0,0,,2005-06-06 00:00,2005-12-13 17:00,2006-12-25 08:00,2006-12-25 08:00,,2007-01-27 00:00,2007-01-27 00:00,,,2005-07-21 08:00,2006-01-30 17:00,,,,,PT_Normal,,,,,H/lBcwFESweQCZIOqNYo8g,zmu2q9ru4ES+8BkTV+xYkB,,,N,0,0,,,2007-02-01 02:42,2007-02-04 01:05,hbe4678,hbe4678,,,0
1453,12457634,14517,6815981,13331,1,100,N,N,N,CP_Units,TT_Task,DT_FixedDUR2,RV_OK,TK_Complete,EM02YPI122,02Y Model Review Mtg,,,,0,0,0,0,48,0,0,0,,2006-01-19 00:00,2006-01-23 17:00,2006-12-25 08:00,2006-12-25 08:00,,2007-01-27 00:00,2007-01-27 00:00,,,2006-01-30 08:00,2006-02-06 17:00,,,,,PT_Normal,,,,,vXD/eX8aQuG6rxPWGDZLCg,idK2rshIRkScNHdRwM2vBh,,,N,0,0,,,2007-02-01 02:42,2007-02-04 01:05,hbe4678,hbe4678,,,0
1454,12457635,14517,6815981,13331,1,100,N,N,N,CP_Units,TT_Task,DT_FixedDUR2,RV_OK,TK_Complete,EM02JPI120,02J Plant Layout Model,,,,0,0,0,0,760,0,0,0,,2005-04-25 00:00,2005-12-13 00:00,2007-05-07 08:00,2007-05-07 08:00,,2007-01-27 00:00,2007-01-27 00:00,,,2005-06-29 08:00,2005-11-10 17:00,,,,,PT_Normal,,,,,ak3knBAYTAWYUw8rSl902g,L/HdKPlfQkaT93AqXdq+9x,,,N,0,0,,,2007-02-01 02:42,2007-02-04 01:05,hbe4678,hbe4678,,,0
1455,12457636,14517,6815981,13331,1,100,N,N,N,CP_Units,TT_Task,DT_FixedDUR2,RV_OK,TK_Complete,EM02JPI123,02J Plant Layout Nozzle Release,,,,0,0,0,0,40,0,0,0,,2005-07-07 08:00,2005-10-21 17:00,2007-05-07 08:00,2007-05-07 08:00,,2007-01-27 00:00,2007-01-27 00:00,,,2005-07-07 08:00,2005-07-13 17:00,,,,,PT_Normal,,,,,kvZme4bzQoSS+VD8vNNw3w,ZH+dRTYtg0aMZrFqkv02gh,,,N,0,0,,,2007-02-01 02:42,2007-02-04 01:05,hbe4678,hbe4678,,,0
1456,12457637,14517,6815981,13331,1,100,N,N,N,CP_Units,TT_Task,DT_FixedDUR2,RV_OK,TK_Complete,EM02JPI130,02J Model Review Mtg,,,,0,0,0,0,16,0,0,0,,2005-12-20 00:00,2005-12-20 00:00,2007-05-07 08:00,2007-05-07 08:00,,2007-01-27 00:00,2007-01-27 00:00,,,2006-01-03 08:00,2006-01-04 17:00,,,,,PT_Normal,,,,,ZP1sLJ6xRPGBB4hDZrzmDg,TBqmNcTF0kSI2xoiQnQokh,,,N,0,0,,,2007-02-01 02:42,2007-02-04 01:05,hbe4678,hbe4678,,,0
1457,12457638,14517,6815981,13331,1,100,N,N,N,CP_Units,TT_Task,DT_FixedDUR2,RV_OK,TK_Complete,EM02JPI132,02J Planning Release,,,,0,0,0,0,8,0,0,0,,2006-02-13 00:00,2006-02-15 00:00,2007-05-07 08:00,2007-05-07 08:00,,2007-01-27 00:00,2007-01-27 00:00,,,2006-03-03 08:00,2006-03-03 17:00,,,,,PT_Normal,,,,,JxBjqjd7QjmH7MuxO/qjmw,WjSo4n/qt02PrhcsOWCy3R,,,N,0,0,,,2007-02-01 02:42,2007-02-04 01:05,hbe4678,hbe4678,,,0
1458,12457639,14517,6815981,13331,1,100,N,N,N,CP_Units,TT_Task,DT_FixedDUR2,RV_OK,TK_Complete,EM02JPI134,02J Detail Model Development,,,,0,0,0,0,400,0,0,0,,2006-02-15 00:00,2006-06-12 17:00,2007-07-09 08:00,2007-07-09 08:00,,2007-01-27 00:00,2007-01-27 00:00,,,2006-03-03 08:00,2006-05-17 17:00,,,,,PT_Normal,,,,,M6dhmqcNRwOKlg/tSMqTrA,hLam3F++p0iDTS190i0sqx,,,N,0,0,,,2007-02-01 02:42,2007-02-04 01:05,hbe4678,hbe4678,,,0
1459,12457640,14517,6815981,13331,1,100,N,N,N,CP_Units,TT_Task,DT_FixedDUR2,RV_OK,TK_Complete,EM02JPI135,02J A/G Piping Iso's - Issue IFC,,,,0,0,0,0,360,0,0,0,,2006-07-24 08:00,2006-12-15 17:00,2007-07-31 08:01,2007-07-31 08:01,,2007-01-27 00:00,2007-01-27 00:00,,,2006-07-24 08:00,2006-09-22 17:00,,,,,PT_Normal,,,,,bz8UeylGQmi9z0xoE8t+sg,C+C9/knTUkySv/Uc7L8yIx,,,N,0,0,,,2007-02-01 02:42,2007-02-04 01:05,hbe4678,hbe4678,,,0
1460,12457641,14517,6815981,13331,1,100,N,N,N,CP_Units,TT_Task,DT_FixedDUR2,RV_OK,TK_Complete,EM02JPI138,02J Design / Issue Pipe Supports IFC,,,,0,0,0,0,360,0,0,0,,2006-07-24 16:59,2006-12-15 17:00,2007-11-23 08:01,2007-11-23 08:01,,2007-01-27 00:00,2007-01-27 00:00,,,2006-07-24 16:59,2006-09-25 16:59,,,,,PT_Normal,,,,,/CSSrZ1IRU2VVl76/qoHAw,n5xuJ+B0pUaxc2emO1LalR,,,N,0,0,,,2007-02-01 02:42,2007-02-04 01:05,hbe4678,hbe4678,,,0
1461,12457642,14517,6815981,13331,1,100,N,N,N,CP_Units,TT_Task,DT_FixedDUR2,RV_OK,TK_Complete,EM02KPI120,02K Plant Layout Model,,,,0,0,0,0,920,0,0,0,,2005-05-16 00:00,2005-12-14 17:00,2007-05-20 08:01,2007-05-20 08:01,,2007-01-27 00:00,2007-01-27 00:00,,,2005-08-04 08:00,2006-01-23 17:00,,,,,PT_Normal,,,,,0lO7QbsGQHyymgfe13Fs2w,H4vx5RSdUEKx3651tdNFgx,,,N,0,0,,,2007-02-01 02:42,2007-02-04 01:05,hbe4678,hbe4678,,,0
1462,12457643,14517,6815981,13331,1,100,N,N,N,CP_Units,TT_Task,DT_FixedDUR2,RV_OK,TK_Complete,EM02KPI123,02K Plant Layout Nozzle Release,,,,0,0,0,0,40,0,0,0,,2005-07-15 08:00,2005-10-21 17:00,2007-06-12 08:01,2007-06-12 08:01,,2007-01-27 00:00,2007-01-27 00:00,,,2005-07-15 08:00,2005-07-21 17:00,,,,,PT_Normal,,,,,pfrGrB8jRlW5vRW/XgOIiw,W4EPE+ABpUyo0b+73K+Csx,,,N,0,0,,,2007-02-01 02:42,2007-02-04 01:05,hbe4678,hbe4678,,,0
1463,12457644,14517,6815981,13331,1,100,N,N,N,CP_Units,TT_Task,DT_FixedDUR2,RV_OK,TK_Complete,EM02KPI130,02K Model Review Mtg,,,,0,0,0,0,16,0,0,0,,2005-12-21 00:00,2005-12-21 00:00,2007-05-20 08:01,2007-05-20 08:01,,2007-01-27 00:00,2007-01-27 00:00,,,2005-12-22 08:00,2005-12-23 17:00,,,,,PT_Normal,,,,,b1FKg3pRQom+1r/xGTkUHQ,fDhFVJ+K4Uq2Exm1ndKsAR,,,N,0,0,,,2007-02-01 02:42,2007-02-04 01:05,hbe4678,hbe4678,,,0
1464,12457645,14517,6815981,13331,1,100,N,N,N,CP_Units,TT_Task,DT_FixedDUR2,RV_OK,TK_Complete,EM02KPI140,02K Model Review Comment Resolution,,,,0,0,0,0,24,0,0,0,,2006-01-09 00:00,2006-01-11 00:00,2007-05-20 08:01,2007-05-20 08:01,,2007-01-27 00:00,2007-01-27 00:00,,,2006-02-27 08:00,2006-03-01 17:00,,,,,PT_Normal,,,,,yjV9pRbKTaO/cnRf849joA,sQBFZtvmt0anCng9HAw3jh,,,N,0,0,,,2007-02-01 02:42,2007-02-04 01:05,hbe4678,hbe4678,,,0
1465,12457646,14517,6815981,13331,1,100,N,N,N,CP_Units,TT_Task,DT_FixedDUR2,RV_OK,TK_Complete,EM02KPI134,02K Plant Detail Model Development,,,,0,0,0,0,200,0,0,0,,2006-06-12 08:00,2006-07-17 17:00,2007-06-18 08:00,2007-06-18 08:00,,2007-01-27 00:00,2007-01-27 00:00,,,2006-06-12 08:00,2006-07-14 17:00,,,,,PT_Normal,,,,,Dls+Js5yQWq+7Qsn4hDZQQ,eENl45YE2Uafd04e1hhV0x,,,N,0,0,,,2007-02-01 02:42,2007-02-04 01:05,hbe4678,hbe4678,,,0
1466,12457647,14517,6815981,13331,1,100,N,N,N,CP_Units,TT_Task,DT_FixedDUR2,RV_OK,TK_Complete,EM02KPI135,02K A/G Piping Iso's - Issue IFC,,,,0,0,0,0,240,0,0,0,,2006-08-14 00:00,2006-12-08 00:00,2007-06-29 17:00,2007-06-29 17:00,,2007-01-27 00:00,2007-01-27 00:00,,,2006-08-24 08:00,2006-10-04 17:00,,,,,PT_Normal,,,,,wURda0s0R9Ob+izufqbbXw,RHMyRqOq+kCugD8rs5vJ3B,,,N,0,0,,,2007-02-01 02:42,2007-02-04 01:05,hbe4678,hbe4678,,,0
1467,12457648,14517,6815981,13331,1,100,N,N,N,CP_Units,TT_Task,DT_FixedDUR2,RV_OK,TK_Complete,EM02KPI138,02K Design / Issue Pipe Supports IFC,,,,0,0,0,0,240,0,0,0,,2006-08-14 00:00,2006-12-08 00:00,2007-12-01 08:01,2007-12-01 08:01,,2007-01-27 00:00,2007-01-27 00:00,,,2006-08-24 08:00,2006-10-04 17:00,,,,,PT_Normal,,,,,C8JfVLCES+ehh7oKFwHNVw,HzwTzXAM9kWIPSa+eLoG6h,,,N,0,0,,,2007-02-01 02:42,2007-02-04 01:05,hbe4678,hbe4678,,,0
1468,12457649,14517,6815981,13331,1,100,N,N,N,CP_Units,TT_Task,DT_FixedDUR2,RV_OK,TK_Complete,EM02MPI120,02M Plant Layout Model,,,,0,0,0,0,800,0,0,0,,2005-08-02 00:00,2006-01-18 00:00,2007-05-07 08:00,2007-05-07 08:00,,2007-01-27 00:00,2007-01-27 00:00,,,2005-08-01 08:00,2005-12-21 17:00,,,,,PT_Normal,,,,,BiTPKND9S6GiJKRqgVBddA,QlUGtnt8C02w34AOyZZuTR,,,N,0,0,,,2007-02-01 02:42,2007-02-04 01:05,hbe4678,hbe4678,,,0
1469,12457650,14517,6815981,13331,1,100,N,N,N,CP_Units,TT_Task,DT_FixedDUR2,RV_OK,TK_Complete,EM02MPI123,02M Plant Layout Nozzle Release,,,,0,0,0,0,280,0,0,0,,2005-09-07 00:00,2005-10-21 17:00,2007-06-12 08:01,2007-06-12 08:01,,2007-01-27 00:00,2007-01-27 00:00,,,2005-09-12 08:00,2005-10-31 17:00,,,,,PT_Normal,,,,,MWUR1PDiThWgEb9dBsJTgQ,kSLeEOL8fU6wQX3s8aYYoB,,,N,0,0,,,2007-02-01 02:42,2007-02-04 01:05,hbe4678,hbe4678,,,0
1470,12457651,14517,6815981,13331,1,100,N,N,N,CP_Units,TT_Task,DT_FixedDUR2,RV_OK,TK_Complete,EM02MPI130,02M Model Review Mtg,,,,0,0,0,0,24,0,0,0,,2006-01-09 00:00,2006-01-11 17:00,2007-05-07 08:00,2007-05-07 08:00,,2007-01-27 00:00,2007-01-27 00:00,,,2006-01-16 08:00,2006-01-18 17:00,,,,,PT_Normal,,,,,CtLElMHlQsGPncxSrgE+JQ,+Wc+W2L75Ui9tid7qbfyWx,,,N,0,0,,,2007-02-01 02:42,2007-02-04 01:05,hbe4678,hbe4678,,,0
1471,12457652,14517,6815981,13331,1,100,N,N,N,CP_Units,TT_Task,DT_FixedDUR2,RV_OK,TK_Complete,EM02MPI132,02M Planning Release,,,,0,0,0,0,8,0,0,0,,2006-02-27 08:00,2006-02-28 08:00,2007-05-07 08:00,2007-05-07 08:00,,2007-01-27 00:00,2007-01-27 00:00,,,2006-02-27 08:00,2006-02-27 17:00,,,,,PT_Normal,,,,,elvkuqSRT6q6TY+t62YYNQ,rgbl8x7qhkGSrEt9avhN6R,,,N,0,0,,,2007-02-01 02:42,2007-02-04 01:05,hbe4678,hbe4678,,,0
1472,12457653,14517,6815981,13331,1,100,N,N,N,CP_Units,TT_Task,DT_FixedDUR2,RV_OK,TK_Complete,EM02MPI134,02M Detail Model Development,,,,0,0,0,0,440,0,0,0,,2006-02-28 08:00,2006-06-26 17:00,2007-06-19 08:01,2007-06-19 08:01,,2007-01-27 00:00,2007-01-27 00:00,,,2006-02-28 08:00,2006-05-19 17:00,,,,,PT_Normal,,,,,bkbjY8nmRsyGXesf0ZHnaA,KLZp1zijfUGcsI+BC4gIXR,,,N,0,0,,,2007-02-01 02:42,2007-02-04 01:05,hbe4678,hbe4678,,,0
1473,12457654,14517,6815981,13331,1,100,N,N,N,CP_Units,TT_Task,DT_FixedDUR2,RV_OK,TK_Complete,EM02MPI135,02M A/G Piping Iso's - Issue IFC,,,,0,0,0,0,160,0,0,0,,2006-07-25 00:00,2006-12-22 17:00,2007-08-01 08:01,2007-08-01 08:01,,2007-01-27 00:00,2007-01-27 00:00,,,2006-08-02 08:00,2006-08-29 17:00,,,,,PT_Normal,,,,,tVqkzV2gQ6yhkT7wqUNMBA,esC+rAMrPEKuVaHLLZ0M9B,,,N,0,0,,,2007-02-01 02:42,2007-02-04 01:05,hbe4678,hbe4678,,,0
1474,12457655,14517,6815981,13331,1,100,N,N,N,CP_Units,TT_Task,DT_FixedDUR2,RV_OK,TK_Complete,EM02MPI138,02M Design / Issue Pipe Supports IFC,,,,0,0,0,0,160,0,0,0,,2006-07-25 00:00,2006-12-22 17:00,2007-11-26 08:01,2007-11-26 08:01,,2007-01-27 00:00,2007-01-27 00:00,,,2006-08-02 08:00,2006-08-29 17:00,,,,,PT_Normal,,,,,pu9D3sl6RdC7Qfwd8HUY4Q,u047TjQPZ0eLQLbWHOLtAR,,,N,0,0,,,2007-02-01 02:42,2007-02-04 01:05,hbe4678,hbe4678,,,0
1475,12457656,14517,6815981,13331,1,100,N,N,N,CP_Units,TT_Task,DT_FixedDUR2,RV_OK,TK_Complete,EM02NPI120,02N Plant Layout Model,,,,0,0,0,0,760,0,0,0,,2005-06-03 00:00,2005-12-14 00:00,2007-05-07 08:00,2007-05-07 08:00,,2007-01-27 00:00,2007-01-27 00:00,,,2005-09-27 08:00,2006-02-15 17:00,,,,,PT_Normal,,,,,j3qSd3XLRQydITEzyAvrYw,dkMEjpz1TkqURa8EN/fURh,,,N,0,0,,,2007-02-01 02:42,2007-02-04 01:05,hbe4678,hbe4678,,,0
1476,12457657,14517,6815981,13331,1,100,N,N,N,CP_Units,TT_Task,DT_FixedDUR2,RV_OK,TK_Complete,EM02DPI138,02D Design / Issue Pipe Supports IFC,,,,0,0,0,0,360,0,0,0,,2006-07-04 08:00,2006-08-07 00:00,2007-11-13 08:01,2007-11-13 08:01,,2007-01-27 00:00,2007-01-27 00:00,,,2006-07-04 08:00,2006-09-04 17:00,,,,,PT_Normal,,,,,bxWDTgKJS4aV2ROv3plO6w,2mRMznIcSUqQftySvJKpFh,,,N,0,0,,,2007-02-01 02:42,2007-02-04 01:05,hbe4678,hbe4678,,,0
1477,12457658,14517,6815981,13331,1,100,N,N,N,CP_Units,TT_Task,DT_FixedDUR2,RV_OK,TK_Complete,EM02EPI120,02E Plant Layout Model,,,,0,0,0,0,1240,0,0,0,,2005-05-16 00:00,2005-12-12 00:00,2007-04-15 08:01,2007-04-15 08:01,,2007-01-27 00:00,2007-01-27 00:00,,,2005-07-20 08:00,2006-03-03 17:00,,,,,PT_Normal,,,,,68V3p8/xSXaT+YjnAJwrGQ,4UPuiVKjK0eXhbU3V2CfPh,,,N,0,0,,,2007-02-01 02:42,2007-02-04 01:05,hbe4678,hbe4678,,,0
1478,12457659,14517,6815981,13331,1,100,N,N,N,CP_Units,TT_Task,DT_FixedDUR2,RV_OK,TK_Complete,EM02EPI123,02E Plant Layout Nozzle Release,,,,0,0,0,0,40,0,0,0,,2005-06-27 08:00,2005-10-21 17:00,2007-04-15 08:01,2007-04-15 08:01,,2007-01-27 00:00,2007-01-27 00:00,,,2005-06-27 08:00,2005-07-01 17:00,,,,,PT_Normal,,,,,Wj+OJpl6Tvazig17jsNPDg,DSQRn2j8S0uLHrKXmujLVh,,,N,0,0,,,2007-02-01 02:42,2007-02-04 01:05,hbe4678,hbe4678,,,0
1479,12457660,14517,6815981,13331,1,100,N,N,N,CP_Units,TT_Task,DT_FixedDUR2,RV_OK,TK_Complete,EM02EPI130,02E Model Review Mtg,,,,0,0,0,0,16,0,0,0,,2005-12-13 08:00,2005-12-14 00:00,2007-04-15 08:01,2007-04-15 08:01,,2007-01-27 00:00,2007-01-27 00:00,,,2005-12-13 08:00,2005-12-14 17:00,,,,,PT_Normal,,,,,T+9Mymz8Tne1kKkvJ6iF3A,ckO43f6wH0yWG5fP7+DVth,,,N,0,0,,,2007-02-01 02:42,2007-02-04 01:05,hbe4678,hbe4678,,,0
1480,12457661,14517,6815981,13331,1,100,N,N,N,CP_Units,TT_Task,DT_FixedDUR2,RV_OK,TK_Complete,EM02EPI132,02E Planning Release,,,,0,0,0,0,8,0,0,0,,2006-02-27 08:00,2006-02-27 17:00,2007-04-15 08:01,2007-04-15 08:01,,2007-01-27 00:00,2007-01-27 00:00,,,2006-02-27 08:00,2006-02-27 17:00,,,,,PT_Normal,,,,,200w1lZ7T7OCvWaDeDnlSQ,7983vvBOM0ij0+M8m+BgHx,,,N,0,0,,,2007-02-01 02:42,2007-02-04 01:05,hbe4678,hbe4678,,,0
1481,12457662,14517,6815981,13331,1,100,N,N,N,CP_Units,TT_Task,DT_FixedDUR2,RV_OK,TK_Complete,EM02EPI134,02E Detail Model Development,,,,0,0,0,0,320,0,0,0,,2006-02-28 08:00,2006-06-13 17:00,2007-04-15 08:01,2007-04-15 08:01,,2007-01-27 00:00,2007-01-27 00:00,,,2006-02-28 08:00,2006-04-27 17:00,,,,,PT_Normal,,,,,DETqYIubTeqSx2V8wFHT2Q,R3num57ifEKVodmXAR69aB,,,N,0,0,,,2007-02-01 02:42,2007-02-04 01:05,hbe4678,hbe4678,,,0
1482,12457663,14517,6815981,13331,1,100,N,N,N,CP_Units,TT_Task,DT_FixedDUR2,RV_OK,TK_Complete,EM02EPI135,02E A/G Piping Iso's - Issue IFC,,,,0,0,0,0,160,0,0,0,,2006-07-25 08:00,2006-10-13 17:00,2007-04-15 08:01,2007-04-15 08:01,,2007-01-27 00:00,2007-01-27 00:00,,,2006-07-25 08:00,2006-08-21 17:00,,,,,PT_Normal,,,,,evX3H4N5QvehB0Pa2hJUSg,34HqEYFUakGn0pbLM25Z1h,,,N,0,0,,,2007-02-01 02:42,2007-02-04 01:05,hbe4678,hbe4678,,,0
1483,12457664,14517,6815981,13331,1,100,N,N,N,CP_Units,TT_Task,DT_FixedDUR2,RV_OK,TK_Complete,EM02EPI138,02E Design / Issue Pipe Supports IFC,,,,0,0,0,0,360,0,0,0,,2006-07-25 00:00,2006-10-13 17:00,2007-09-17 08:01,2007-09-17 08:01,,2007-01-27 00:00,2007-01-27 00:00,,,2006-06-05 08:00,2006-08-04 17:00,,,,,PT_Normal,,,,,IrgtbjmTS0SyKxiGuR5AFw,dmnx3eJMC0S5qOR1eRuPOR,,,N,0,0,,,2007-02-01 02:42,2007-02-04 01:05,hbe4678,hbe4678,,,0
1484,12457665,14517,6815981,13331,1,100,N,N,N,CP_Units,TT_Task,DT_FixedDUR2,RV_OK,TK_Complete,EM02FPI120,02F Plant Layout Model,,,,0,0,0,0,360,0,0,0,,2005-10-31 08:00,2005-12-14 17:00,2007-05-05 08:01,2007-05-05 08:01,,2007-01-27 00:00,2007-01-27 00:00,,,2005-10-31 08:00,2006-01-10 17:00,,,,,PT_Normal,,,,,HRXC1QBGSheGKAVptc9j/A,SVQDYN/2Uk6qcPy0nkqVhB,,,N,0,0,,,2007-02-01 02:42,2007-02-04 01:05,hbe4678,hbe4678,,,0
1485,12457666,14517,6815981,13331,1,100,N,N,N,CP_Units,TT_Task,DT_FixedDUR2,RV_OK,TK_Complete,EM02FPI123,02F Plant Layout Nozzle Release,,,,0,0,0,0,40,0,0,0,,2005-11-28 08:00,2005-12-02 17:00,2007-05-05 08:01,2007-05-05 08:01,,2007-01-27 00:00,2007-01-27 00:00,,,2005-11-28 08:00,2005-12-02 17:00,,,,,PT_Normal,,,,,QhhZuyqZRM238MQx3HJ+SA,3B2VSCjODEmgQPvuy/rLhB,,,N,0,0,,,2007-02-01 02:42,2007-02-04 01:05,hbe4678,hbe4678,,,0
1486,12457667,14517,6815981,13331,1,100,N,N,N,CP_Units,TT_Task,DT_FixedDUR2,RV_OK,TK_Complete,EM02FPI130,02F Model Review Mtg,,,,0,0,0,0,24,0,0,0,,2006-01-12 08:00,2006-01-16 17:00,2007-05-05 08:01,2007-05-05 08:01,,2007-01-27 00:00,2007-01-27 00:00,,,2006-01-12 08:00,2006-01-16 17:00,,,,,PT_Normal,,,,,nhiJFe2NTM+v4u9zUcktyQ,xEH92w/IpEq5Y9ILLuCoEx,,,N,0,0,,,2007-02-01 02:42,2007-02-04 01:05,hbe4678,hbe4678,,,0
1487,12457668,14517,6815981,13331,1,100,N,N,N,CP_Units,TT_Task,DT_FixedDUR2,RV_OK,TK_Complete,EM02FPI132,02F Planning Release,,,,0,0,0,0,8,0,0,0,,2006-02-16 08:00,2006-02-16 17:00,2007-05-05 08:01,2007-05-05 08:01,,2007-01-27 00:00,2007-01-27 00:00,,,2006-02-16 08:00,2006-02-16 17:00,,,,,PT_Normal,,,,,UBBYFmSeSg+6IngoXYQ3yg,n/gSGUUzd0aJ839es4MXwh,,,N,0,0,,,2007-02-01 02:42,2007-02-04 01:05,hbe4678,hbe4678,,,0
1488,12457669,14517,6815981,13331,1,100,N,N,N,CP_Units,TT_Task,DT_FixedDUR2,RV_OK,TK_Complete,EM02FPI134,02F Detail Model Development,,,,0,0,0,0,280,0,0,0,,2006-04-03 08:00,2006-06-14 17:00,2007-05-05 08:01,2007-05-05 08:01,,2007-01-27 00:00,2007-01-27 00:00,,,2006-04-03 08:00,2006-05-24 17:00,,,,,PT_Normal,,,,,wAIvrhUFTlq3TZHAUclldA,gjFvXQOlsE+YiDS/Gr9vJR,,,N,0,0,,,2007-02-01 02:42,2007-02-04 01:05,hbe4678,hbe4678,,,0
1489,12457670,14517,6815981,13331,1,100,N,N,N,CP_Units,TT_Task,DT_FixedDUR2,RV_OK,TK_Complete,EM02FPI135,02F A/G Piping Iso's - Issue IFC,,,,0,0,0,0,280,0,0,0,,2006-07-03 00:00,2006-10-20 17:00,2007-05-05 08:01,2007-05-05 08:01,,2007-01-27 00:00,2007-01-27 00:00,,,2006-07-12 08:00,2006-08-29 17:00,,,,,PT_Normal,,,,,jUKDXRvJTe2LYarW5KSv+Q,D7x46HPU9ECDbqIbcxYexx,,,N,0,0,,,2007-02-01 02:42,2007-02-04 01:05,hbe4678,hbe4678,,,0
1490,12457671,14517,6815981,13331,1,100,N,N,N,CP_Units,TT_Task,DT_FixedDUR2,RV_OK,TK_Complete,EM02FPI138,02F Design / Issue Pipe Supports IFC,,,,0,0,0,0,360,0,0,0,,2006-07-03 08:00,2006-10-20 17:00,2007-12-29 08:01,2007-12-29 08:01,,2007-01-27 00:00,2007-01-27 00:00,,,2006-07-03 08:00,2006-09-01 17:00,,,,,PT_Normal,,,,,LvzG6olvREa2SLwqVZy9rg,PfOuNoQ+DEmWcEO9RblQ0h,,,N,0,0,,,2007-02-01 02:42,2007-02-04 01:05,hbe4678,hbe4678,,,0
1491,12457672,14517,6815981,13331,1,100,N,N,N,CP_Units,TT_Task,DT_FixedDUR2,RV_OK,TK_Complete,EM02GPI120,02G Plant Layout Model,,,,0,0,0,0,360,0,0,0,,2005-09-05 00:00,2006-05-16 00:00,2007-05-07 08:00,2007-05-07 08:00,,2007-01-27 00:00,2007-01-27 00:00,,,2005-09-19 08:00,2005-11-21 17:00,,,,,PT_Normal,,,,,QA+6RZU5T/CqadzqXmfF6Q,wZW3h7B4+ka19geoINBdzx,,,N,0,0,,,2007-02-01 02:42,2007-02-04 01:05,hbe4678,hbe4678,,,0
1492,12457673,14517,6815981,13331,1,100,N,N,N,CP_Units,TT_Task,DT_FixedDUR2,RV_OK,TK_Complete,EM02GPI123,02G Plant Layout Nozzle Release,,,,0,0,0,0,40,0,0,0,,2006-03-27 08:00,2006-04-21 00:00,2007-05-07 08:00,2007-05-07 08:00,,2007-01-27 00:00,2007-01-27 00:00,,,2006-03-27 08:00,2006-03-31 17:00,,,,,PT_Normal,,,,,Hb3yD3aARdiC3OUP5gEowA,WbDMMPAK5kOFUV2zzee6uh,,,N,0,0,,,2007-02-01 02:42,2007-02-04 01:05,hbe4678,hbe4678,,,0
1493,12457674,14517,6815981,13331,1,100,N,N,N,CP_Units,TT_Task,DT_FixedDUR2,RV_OK,TK_Complete,EM02GPI130,02G Model Review Mtg,,,,0,0,0,0,24,0,0,0,,2006-05-17 00:00,2006-05-19 00:00,2007-05-07 08:00,2007-05-07 08:00,,2007-01-27 00:00,2007-01-27 00:00,,,2006-05-18 08:00,2006-05-22 17:00,,,,,PT_Normal,,,,,GtT/QyOmSUiw/N02NNE8jw,29MEug7qTkmjUK0YSOH8Gh,,,N,0,0,,,2007-02-01 02:42,2007-02-04 01:05,hbe4678,hbe4678,,,0
1494,12457675,14517,6815981,13331,1,100,N,N,N,CP_Units,TT_Task,DT_FixedDUR2,RV_OK,TK_Complete,EM02GPI132,02G Planning Release,,,,0,0,0,0,48,0,0,0,,2006-07-05 08:00,2006-08-21 17:00,2007-05-07 08:00,2007-05-07 08:00,,2007-01-27 00:00,2007-01-27 00:00,,,2006-07-05 08:00,2006-07-12 17:00,,,,,PT_Normal,,,,,wIxs5ISkRBCA7VzQAxeW/w,3o+v3WZIQUOcjQQZXRA22B,,,N,0,0,,,2007-02-01 02:42,2007-02-04 01:05,hbe4678,hbe4678,,,0
1495,12457676,14517,6815981,13331,1,100,N,N,N,CP_Units,TT_Task,DT_FixedDUR2,RV_OK,TK_Complete,EM02GPI134,02G Detail Model Development,,,,0,0,0,0,440,0,0,0,,2006-08-15 08:00,2006-09-15 00:00,2007-06-07 08:01,2007-06-07 08:01,,2007-01-27 00:00,2007-01-27 00:00,,,2006-08-15 08:00,2006-10-30 17:00,,,,,PT_Normal,,,,,wPJnRHE3RGmaIOaGIy6VCw,VamFN/JBn0mhkkHMYv0XaR,,,N,0,0,,,2007-02-01 02:42,2007-02-04 01:05,hbe4678,hbe4678,,,0
1496,12457677,14517,6815981,13331,1,100,N,N,N,CP_Units,TT_Task,DT_FixedDUR2,RV_OK,TK_Complete,EM02GPI135,02G A/G Piping Iso's - Issue IFC,,,,0,0,0,0,120,0,0,0,,2006-10-18 00:00,2006-12-22 00:00,2007-07-09 08:01,2007-07-09 08:01,,2007-02-02 17:00,2007-02-02 17:00,,,2006-10-23 08:00,2006-11-13 17:00,,,,,PT_Normal,,,,,lgC9sV/SSxyowWCfuTFweQ,UTJDJdndMEW3De2h/HyHph,,,N,0,0,,,2007-02-01 02:42,2007-02-04 01:05,hbe4678,hbe4678,,,0
1497,12457678,14517,6815981,13331,1,100,N,N,N,CP_Units,TT_Task,DT_FixedDUR2,RV_OK,TK_Complete,EM02GPI138,02G Design / Issue Pipe Supports IFC,,,,0,0,0,0,360,0,0,0,,2006-10-18 00:00,2007-01-22 00:00,2007-09-20 08:01,2007-09-20 08:01,,2007-02-02 17:00,2007-02-02 17:00,,,2006-10-23 08:00,2006-12-28 17:00,,,,,PT_Normal,,,,,bE6k32kmROKXhwCaSYKKvA,GT/buSoEHk+tM+Xr+y71Bx,,,N,0,0,,,2007-02-01 02:42,2007-02-04 01:05,hbe4678,hbe4678,,,0
1498,12457679,14517,6815981,13331,1,100,N,N,N,CP_Units,TT_Task,DT_FixedDUR2,RV_OK,TK_Complete,EM02LPI120,02L Plant Layout Model,,,,0,0,0,0,368,0,0,0,,2005-08-10 00:00,2005-12-19 17:00,2007-01-09 08:01,2007-01-09 08:01,,2007-01-27 00:00,2007-01-27 00:00,,,2005-09-01 08:00,2005-11-07 17:00,,,,,PT_Normal,,,,,NNCW9lDcR2GUEQYZPoSyyg,,,,N,0,0,,,2007-02-01 02:42,2007-02-04 01:05,hbe4678,hbe4678,,,0
1499,12457680,14517,6815981,13330,1,100,N,N,N,CP_Units,TT_Task,DT_FixedDUR2,RV_OK,TK_Complete,EK020PI013,020 Plot Plan - Issue IPL (ISBL),,,,0,0,0,0,160,0,0,0,,2005-10-31 00:00,2006-02-23 00:00,2006-12-25 08:00,2006-12-25 08:00,,2007-01-27 00:00,2007-01-27 00:00,,,2006-03-27 08:01,2006-04-24 08:01,,,,,PT_Normal,,,,,h/H53k7rTBGYjY/wctDtTQ,,,,N,0,0,,,2007-02-01 02:42,2007-02-04 01:05,hbe4678,hbe4678,,,0
1500,12457681,14517,6815981,13331,1,100,N,N,N,CP_Units,TT_Task,DT_FixedDUR2,RV_OK,TK_Complete,EM02API120,02A Plant Layout Model,,,,0,0,0,0,720,0,0,0,,2005-05-26 00:00,2006-01-13 00:00,2007-05-07 08:00,2007-05-07 08:00,,2007-01-27 00:00,2007-01-27 00:00,,,2005-08-04 08:00,2005-12-09 17:00,,,,,PT_Normal,,,,,/8HvcaQkTOajIS+XmeCCAA,/EAGNvvB1USewhheVzHWGh,,,N,0,0,,,2007-02-01 02:42,2007-02-04 01:05,hbe4678,hbe4678,,,0
1501,12457682,14517,6815981,13331,1,100,N,N,N,CP_Units,TT_Task,DT_FixedDUR2,RV_OK,TK_Complete,EM02API123,02A Plant Layout Nozzle Release,,,,0,0,0,0,40,0,0,0,,2005-07-20 08:00,2005-10-21 00:00,2007-05-07 08:00,2007-05-07 08:00,,2007-01-27 00:00,2007-01-27 00:00,,,2005-07-20 08:00,2005-07-26 17:00,,,,,PT_Normal,,,,,BAEJaoU/QCGPc0rmvRPX9g,wFS3netJ3k6E6xrcWJHoch,,,N,0,0,,,2007-02-01 02:42,2007-02-04 01:05,hbe4678,hbe4678,,,0
1502,12457683,14517,6815981,13331,1,100,N,N,N,CP_Units,TT_Task,DT_FixedDUR2,RV_OK,TK_Complete,EM02API130,02A Model Review Mtg,,,,0,0,0,0,8,0,0,0,,2006-01-18 00:00,2006-01-18 00:00,2007-05-07 08:00,2007-05-07 08:00,,2007-01-27 00:00,2007-01-27 00:00,,,2006-01-20 08:00,2006-01-20 17:00,,,,,PT_Normal,,,,,YuI+/woVTHW/Mo58rTI2PQ,9qGQE1jRMkmVSt1uJXqj8h,,,N,0,0,,,2007-02-01 02:42,2007-02-04 01:05,hbe4678,hbe4678,,,0
1503,12457684,14517,6815981,13331,1,100,N,N,N,CP_Units,TT_Task,DT_FixedDUR2,RV_OK,TK_Complete,EM02API132,02A Planning Release,,,,0,0,0,0,8,0,0,0,,2006-02-09 08:00,2006-02-09 17:00,2007-05-07 08:00,2007-05-07 08:00,,2007-01-27 00:00,2007-01-27 00:00,,,2006-02-09 08:00,2006-02-09 17:00,,,,,PT_Normal,,,,,HEk/HmZhRO2DPwi9gdxuCA,n2TQS8+de0Gn5P2Kko3LRh,,,N,0,0,,,2007-02-01 02:42,2007-02-04 01:05,hbe4678,hbe4678,,,0
1504,12457685,14517,6815981,13331,1,100,N,N,N,CP_Units,TT_Task,DT_FixedDUR2,RV_OK,TK_Complete,EM02API134,02A Detail Model Development,,,,0,0,0,0,320,0,0,0,,2006-04-21 08:00,2006-06-16 17:00,2007-05-27 08:01,2007-05-27 08:01,,2007-01-27 00:00,2007-01-27 00:00,,,2006-04-21 08:00,2006-06-16 17:00,,,,,PT_Normal,,,,,jZkrxMS9SlqK2VW29LvF1g,sMqM3yF3+0CrGK8Ohpq/ah,,,N,0,0,,,2007-02-01 02:42,2007-02-04 01:05,hbe4678,hbe4678,,,0
1505,12457686,14517,6815981,13331,1,100,N,N,N,CP_Units,TT_Task,DT_FixedDUR2,RV_OK,TK_Complete,EM02API135,02A A/G Piping Iso's - Issue IFC,,,,0,0,0,0,160,0,0,0,,2006-07-24 08:00,2006-12-22 17:00,2007-06-10 08:01,2007-06-10 08:01,,2007-01-27 00:00,2007-01-27 00:00,,,2006-07-24 08:00,2006-08-18 17:00,,,,,PT_Normal,,,,,bpqdVZ0fS4uEEHzhxFfrSg,YGDFUUmznUqOk6gvti9Onx,,,N,0,0,,,2007-02-01 02:42,2007-02-04 01:05,hbe4678,hbe4678,,,0
1506,12457687,14517,6815981,13331,1,100,N,N,N,CP_Units,TT_Task,DT_FixedDUR2,RV_OK,TK_Complete,EM02API138,02A Design / Issue Pipe Supports IFC,,,,0,0,0,0,360,0,0,0,,2006-07-24 08:00,2006-12-22 17:00,2007-11-30 08:00,2007-11-30 08:00,,2007-01-27 00:00,2007-01-27 00:00,,,2006-07-24 08:00,2006-09-22 17:00,,,,,PT_Normal,,,,,lg6ZLxDfRamWGLMCw1O7Nw,mWGIMmSHdkmqP7nlO76g2B,,,N,0,0,,,2007-02-01 02:42,2007-02-04 01:05,hbe4678,hbe4678,,,0
1507,12457688,14517,6815981,13330,1,100,N,N,N,CP_Units,TT_Task,DT_FixedDUR2,RV_OK,TK_Complete,EK020PI014,Plot Plan - ISBL (Area 02) Issue IFC,,,,0,0,0,0,448,0,0,0,,2006-02-27 08:00,2006-04-28 17:00,2006-12-25 08:00,2006-12-25 08:00,,2007-01-27 00:00,2007-01-27 00:00,,,2006-02-27 08:00,2006-05-15 17:00,,,,,PT_Normal,,,,,yDJ5KQgTQo23FRC1lVaMBg,SqhcCcNcIkKoBG8FxYt/nB,,,N,0,0,,,2007-02-01 02:42,2007-02-04 01:05,hbe4678,hbe4678,,,0
1508,12457689,14517,6815981,13331,1,100,N,N,N,CP_Units,TT_Task,DT_FixedDUR2,RV_OK,TK_Complete,EM02BPI120,02B Plant Layout Model,,,,0,0,0,0,720,0,0,0,,2005-05-23 00:00,2005-12-01 17:00,2007-04-01 08:01,2007-04-01 08:01,,2007-01-27 00:00,2007-01-27 00:00,,,2005-08-09 08:00,2005-12-15 17:00,,,,,PT_Normal,,,,,97XiYgulQ9C59aNvDVpPpw,Add0PIAn8UW7GHKuN7i4Xh,,,N,0,0,,,2007-02-01 02:42,2007-02-04 01:05,hbe4678,hbe4678,,,0
1509,12457690,14517,6815981,13331,1,100,N,N,N,CP_Units,TT_Task,DT_FixedDUR2,RV_OK,TK_Complete,EM02BPI130,02B Model Review Mtg,,,,0,0,0,0,8,0,0,0,,2005-12-12 00:00,2005-12-12 00:00,2007-04-01 08:01,2007-04-01 08:01,,2007-01-27 00:00,2007-01-27 00:00,,,2005-12-13 08:00,2005-12-13 17:00,,,,,PT_Normal,,,,,nLQhaEIdSqucQrecRnA4dg,p2aVtRluvUGL30HxnWOsIR,,,N,0,0,,,2007-02-01 02:42,2007-02-04 01:05,hbe4678,hbe4678,,,0
1510,12457691,14517,6815981,13331,1,100,N,N,N,CP_Units,TT_Task,DT_FixedDUR2,RV_OK,TK_Complete,EM02BPI132,02B Planning Release,,,,0,0,0,0,8,0,0,0,,2006-02-08 08:00,2006-02-08 17:00,2007-04-01 08:01,2007-04-01 08:01,,2007-01-27 00:00,2007-01-27 00:00,,,2006-02-08 08:00,2006-02-08 17:00,,,,,PT_Normal,,,,,MScVwH7JTGmMEJQOqZ3grQ,UWmTJ6bETk6CSONfmhn//x,,,N,0,0,,,2007-02-01 02:42,2007-02-04 01:05,hbe4678,hbe4678,,,0
1511,12457692,14517,6815981,13331,1,100,N,N,N,CP_Units,TT_Task,DT_FixedDUR2,RV_OK,TK_Complete,EM02BPI134,02B Detail Model Development,,,,0,0,0,0,160,0,0,0,,2006-02-27 08:00,2006-04-12 00:00,2007-04-01 08:01,2007-04-01 08:01,,2007-01-27 00:00,2007-01-27 00:00,,,2006-02-27 08:00,2006-03-27 17:00,,,,,PT_Normal,,,,,UtD+grAjSMCD5NsMVa6wmg,gwNIJckBLEWiiU4f/uKQYR,,,N,0,0,,,2007-02-01 02:42,2007-02-04 01:05,hbe4678,hbe4678,,,0
1512,12457693,14517,6815981,13331,1,100,N,N,N,CP_Units,TT_Task,DT_FixedDUR2,RV_OK,TK_Complete,EM02BPI135,02B A/G Piping Iso's - Issue IFC,,,,0,0,0,0,16,0,0,0,,2006-04-28 00:00,2006-05-15 17:00,2007-04-01 08:01,2007-04-01 08:01,,2007-01-27 00:00,2007-01-27 00:00,,,2006-05-02 08:00,2006-05-03 17:00,,,,,PT_Normal,,,,,ujTeyxgtQtihQEmuS/Zy8g,OFw9cg2Ye0Oooz3J3VJLKB,,,N,0,0,,,2007-02-01 02:42,2007-02-04 01:05,hbe4678,hbe4678,,,0
1513,12457694,14517,6815981,13331,1,100,N,N,N,CP_Units,TT_Task,DT_FixedDUR2,RV_OK,TK_Complete,EM02BPI138,02B Design / Issue Pipe Supports IFC,,,,0,0,0,0,240,0,0,0,,2006-03-13 00:00,2006-05-15 17:00,2008-02-02 08:01,2008-02-02 08:01,,2007-01-27 00:00,2007-01-27 00:00,,,2006-03-17 08:00,2006-05-03 17:00,,,,,PT_Normal,,,,,iwTW5d1BQI+njwk31pTvIA,fjSys7FjSEOAxk8EaJ3u3x,,,N,0,0,,,2007-02-01 02:42,2007-02-04 01:05,hbe4678,hbe4678,,,0
1514,12457695,14517,6815981,13331,1,100,N,N,N,CP_Units,TT_Task,DT_FixedDUR2,RV_OK,TK_Complete,EM02DPI120,02D Plant Layout Model,,,,0,0,0,0,880,0,0,0,,2005-06-06 00:00,2006-01-16 17:00,2007-04-24 08:01,2007-04-24 08:01,,2007-01-27 00:00,2007-01-27 00:00,,,2005-10-04 08:00,2006-03-15 17:00,,,,,PT_Normal,,,,,tVDzgTpsSPqbPGsoou2aHg,nYsRPqix3UOfC/s7Z9+8tx,,,N,0,0,,,2007-02-01 02:42,2007-02-04 01:05,hbe4678,hbe4678,,,0
1515,12457696,14517,6815981,13331,1,100,N,N,N,CP_Units,TT_Task,DT_FixedDUR2,RV_OK,TK_Complete,EM02DPI123,02D Plant Layout Nozzle Release,,,,0,0,0,0,40,0,0,0,,2005-07-06 08:00,2005-10-25 17:00,2007-04-24 08:01,2007-04-24 08:01,,2007-01-27 00:00,2007-01-27 00:00,,,2005-07-06 08:00,2005-07-12 17:00,,,,,PT_Normal,,,,,vT3a1D5sQkWU0eNUv/pUmA,dLtGbVyA9kilaid0hF2TSR,,,N,0,0,,,2007-02-01 02:42,2007-02-04 01:05,hbe4678,hbe4678,,,0
1516,12457697,14517,6815981,13331,1,100,N,N,N,CP_Units,TT_Task,DT_FixedDUR2,RV_OK,TK_Complete,EM02DPI130,02D Model Review Mtg,,,,0,0,0,0,16,0,0,0,,2006-01-12 00:00,2006-01-13 00:00,2007-04-24 08:01,2007-04-24 08:01,,2007-01-27 00:00,2007-01-27 00:00,,,2006-01-17 08:00,2006-01-18 17:00,,,,,PT_Normal,,,,,pSSue3ISQGuNfpKQQ2qrDA,VWDux/mO7EKDqhDfqAmMNh,,,N,0,0,,,2007-02-01 02:42,2007-02-04 01:05,hbe4678,hbe4678,,,0
1517,12457698,14517,6815981,13331,1,100,N,N,N,CP_Units,TT_Task,DT_FixedDUR2,RV_OK,TK_Complete,EM02DPI132,02D Planning Release,,,,0,0,0,0,8,0,0,0,,2006-02-21 08:00,2006-02-21 17:00,2007-04-24 08:01,2007-04-24 08:01,,2007-01-27 00:00,2007-01-27 00:00,,,2006-02-21 08:00,2006-02-21 17:00,,,,,PT_Normal,,,,,brJ6I9JzQASw9FtI772j4g,CCTYDYRDcUC1BTuguCuU5x,,,N,0,0,,,2007-02-01 02:42,2007-02-04 01:05,hbe4678,hbe4678,,,0
1518,12457699,14517,6815981,13331,1,100,N,N,N,CP_Units,TT_Task,DT_FixedDUR2,RV_OK,TK_Complete,EM02DPI134,02D Detail Model Development,,,,0,0,0,0,400,0,0,0,,2006-02-27 08:00,2006-05-18 17:00,2007-04-24 08:01,2007-04-24 08:01,,2007-01-27 00:00,2007-01-27 00:00,,,2006-02-27 08:00,2006-05-11 17:00,,,,,PT_Normal,,,,,YcPLKZxPTXeZwWYfCXOpyA,7FxkNsEQtU6GJOPr5qPcLR,,,N,0,0,,,2007-02-01 02:42,2007-02-04 01:05,hbe4678,hbe4678,,,0
1519,12457700,14517,6815981,13331,1,100,N,N,N,CP_Units,TT_Task,DT_FixedDUR2,RV_OK,TK_Complete,EM02DPI135,02D A/G Piping Iso's - Issue IFC,,,,0,0,0,0,280,0,0,0,,2006-07-04 08:00,2006-08-07 00:00,2007-04-24 08:01,2007-04-24 08:01,,2007-01-27 00:00,2007-01-27 00:00,,,2006-07-04 08:00,2006-08-21 17:00,,,,,PT_Normal,,,,,eCM7eWzPRpaQbB+rSfkSyQ,EcOGErk060KsmN4+P+hExh,,,N,0,0,,,2007-02-01 02:42,2007-02-04 01:05,hbe4678,hbe4678,,,0
1520,12457701,14517,6815981,13331,1,100,N,N,N,CP_Units,TT_Task,DT_FixedDUR2,RV_OK,TK_Complete,EM02LPI123,02L Plant Layout Nozzle Release,,,,0,0,0,0,48,0,0,0,,2005-11-10 00:00,2005-11-18 17:00,2007-01-09 08:01,2007-01-09 08:01,,2007-01-27 00:00,2007-01-27 00:00,,,2005-11-08 08:00,2005-11-15 17:00,,,,,PT_Normal,,,,,NphRhHPvSZyA9PC2FZZZ9Q,,,,N,0,0,,,2007-02-01 02:42,2007-02-04 01:05,hbe4678,hbe4678,,,0
1521,12457702,14517,6815981,13331,1,100,N,N,N,CP_Units,TT_Task,DT_FixedDUR2,RV_OK,TK_Complete,EM02LPI130,02L Model Review Mtg,,,,0,0,0,0,40,0,0,0,,2005-12-22 00:00,2006-01-04 00:00,2007-01-09 08:01,2007-01-09 08:01,,2007-01-27 00:00,2007-01-27 00:00,,,2006-01-04 08:00,2006-01-10 17:00,,,,,PT_Normal,,,,,CbLT3GcOQcSUXxL9gB+d7g,,,,N,0,0,,,2007-02-01 02:42,2007-02-04 01:05,hbe4678,hbe4678,,,0
1522,12457703,14517,6815981,13331,1,100,N,N,N,CP_Units,TT_Task,DT_FixedDUR2,RV_OK,TK_Complete,EM02LPI132,02L Planning Release,,,,0,0,0,0,8,0,0,0,,2006-02-27 08:00,2006-02-27 17:00,2007-01-09 08:01,2007-01-09 08:01,,2007-01-27 00:00,2007-01-27 00:00,,,2006-02-27 08:00,2006-02-27 17:00,,,,,PT_Normal,,,,,RaXtJU/rRrq51Xr/dn4vcA,,,,N,0,0,,,2007-02-01 02:42,2007-02-04 01:05,hbe4678,hbe4678,,,0
1523,12457704,14517,6815981,13331,1,100,N,N,N,CP_Units,TT_Task,DT_FixedDUR2,RV_OK,TK_Complete,EM02LPI134,02L Detail Model Development,,,,0,0,0,0,440,0,0,0,,2006-03-09 00:00,2006-06-16 17:00,2007-01-09 08:01,2007-01-09 08:01,,2007-01-27 00:00,2007-01-27 00:00,,,2006-03-15 08:00,2006-06-05 17:00,,,,,PT_Normal,,,,,GuJO02rHR7qPr2ImE7IAuA,,,,N,0,0,,,2007-02-01 02:42,2007-02-04 01:05,hbe4678,hbe4678,,,0
1524,12457705,14517,6815981,13331,1,100,N,N,N,CP_Units,TT_Task,DT_FixedDUR2,RV_OK,TK_Complete,EM02LPI135,02L A/G Piping Iso's - Issue IFC,,,,0,0,0,0,248,0,0,0,,2006-07-21 00:00,2006-12-22 17:00,2007-05-15 08:01,2007-05-15 08:01,,2007-01-27 00:00,2007-01-27 00:00,,,2006-08-07 08:00,2006-09-18 17:00,,,,,PT_Normal,,,,,qs7c2eGuQValQo7VPl3Bww,,,,N,0,0,,,2007-02-01 02:42,2007-02-04 01:05,hbe4678,hbe4678,,,0
1525,12457706,14517,6815981,13331,1,100,N,N,N,CP_Units,TT_Task,DT_FixedDUR2,RV_OK,TK_Complete,EM02LPI138,02L Design / Issue Pipe Supports IFC,,,,0,0,0,0,248,0,0,0,,2006-07-21 00:00,2006-12-22 17:00,2007-07-20 08:01,2007-07-20 08:01,,2007-01-27 00:00,2007-01-27 00:00,,,2006-08-07 08:00,2006-09-18 17:00,,,,,PT_Normal,,,,,W2pV19N/Rp2nJ3StxqHd4w,,,,N,0,0,,,2007-02-01 02:42,2007-02-04 01:05,hbe4678,hbe4678,,,0
1526,12457707,14517,6815981,13331,1,100,N,N,N,CP_Units,TT_Task,DT_FixedDUR2,RV_OK,TK_Complete,EM02UPI190,02U Detail Model Development - All Services,,,,0,0,0,0,200,0,0,0,,2006-01-09 08:00,2006-03-10 00:00,2006-12-25 08:00,2006-12-25 08:00,,2007-01-27 00:00,2007-01-27 00:00,,,2006-01-09 08:00,2006-02-10 17:00,,,,,PT_Normal,,,,,kPBk2xE9T++F/v+OFDJU2w,,,,N,0,0,,,2007-02-01 02:42,2007-02-04 01:05,hbe4678,hbe4678,,,0
1527,12457708,14517,6816002,13331,1,100,N,N,N,CP_Units,TT_Task,DT_FixedDUR2,RV_OK,TK_Complete,EM04API138,04A Design / Issue Pipe & Supports IFC,,,,0,0,0,0,360,0,0,0,,2006-09-30 00:00,2006-10-27 00:00,2007-07-04 08:01,2007-07-04 08:01,,2007-01-27 00:00,2007-01-27 00:00,,,2006-10-02 08:00,2006-12-05 17:00,,,,,PT_Normal,,,,,v/0VZCOVQyKJqSrB6VobFQ,0XMov0SyJUeLa4hW95/nSx,,,N,0,0,,,2007-02-01 02:42,2007-02-04 01:05,hbe4678,hbe4678,,,0
1528,12457709,14517,6816002,13331,1,100,N,N,N,CP_Units,TT_Task,DT_FixedDUR2,RV_OK,TK_Complete,EM04API120,04A Plant Layout Model,,,,0,0,0,0,480,0,0,0,,2006-09-11 08:00,2006-09-29 17:00,2007-05-07 08:00,2007-05-07 08:00,,2007-01-27 00:00,2007-01-27 00:00,,,2006-09-11 08:00,2006-12-05 17:00,,,,,PT_Normal,,,,,ZjdTbxhuTwG2nt/FG9Nx4A,2QNWHi/z9U2zotgGZhbcTx,,,N,0,0,,,2007-02-01 02:42,2007-02-04 01:05,hbe4678,hbe4678,,,0
1529,12457710,14517,6816002,13331,1,100,N,N,N,CP_Units,TT_Task,DT_FixedDUR2,RV_OK,TK_Complete,EM04API134,04A Plant Detail Model Development,,,,0,0,0,0,240,0,0,0,,2006-09-30 00:00,2006-10-27 00:00,2007-07-04 08:01,2007-07-04 08:01,,2007-01-27 00:00,2007-01-27 00:00,,,2006-10-02 08:00,2006-11-13 17:00,,,,,PT_Normal,,,,,dBLEGpUSTL+iPlVoEYzFRw,4EU4v6ndXU+PJC1L6asclx,,,N,0,0,,,2007-02-01 02:42,2007-02-04 01:05,hbe4678,hbe4678,,,0
1530,12457711,14517,6816011,13330,1,100,N,N,N,CP_Units,TT_Task,DT_FixedDUR2,RV_OK,TK_Complete,EM05AMD229,05A Vessel Steel Release IFC,,,,0,0,0,0,160,0,0,0,,2006-07-03 00:00,2006-07-28 17:00,2007-06-08 17:00,2007-06-08 17:00,,2007-01-27 00:00,2007-01-27 00:00,,,2006-08-31 08:01,2006-09-28 08:01,,,,,PT_Normal,,,,,f6FXWAzuR6qklbiNENtowA,3EQlvQ+UHkaI9tI5Jromhh,,,N,0,0,,,2007-02-01 02:42,2007-02-04 01:05,hbe4678,hbe4678,,,0
1531,12457712,14517,6816013,13331,1,0,N,N,N,CP_Units,TT_Task,DT_FixedDUR2,RV_OK,TK_NotStart,EM05BPI136,05B IDP - Detail Design,,600,0,16,0,0,0,16,0,0,0,,,,2007-06-22 08:00,2007-06-25 17:00,,2007-03-09 08:00,2007-03-12 17:00,2007-03-09 08:00,2007-03-12 17:00,2007-03-09 08:00,2007-03-12 17:00,,2007-06-22 08:00,2007-06-25 17:00,,PT_Normal,,,,,ECAwD9pjR9uqMFEnoaanhg,vI0Qzy/7602Yp6TMv55KjB,,,N,0,0,,,2007-02-01 02:42,2007-02-01 02:43,hbe4678,hbe4678,2007-03-09 08:00,2007-03-12 17:00,16
1532,12457713,14517,6816013,13331,1,100,N,N,N,CP_Units,TT_Task,DT_FixedDUR2,RV_OK,TK_Complete,EM05UPI175,05U Plant Layout Model   - Common,,,,0,0,0,0,120,0,0,0,,2005-10-31 08:00,2005-11-11 00:00,2007-02-07 08:01,2007-02-07 08:01,,2007-01-27 00:00,2007-01-27 00:00,,,2005-10-31 08:00,2005-11-21 17:00,,,,,PT_Normal,,,,,+WULmd27RCiWujFXOEBdEQ,AKEX7RGgzU22OSMuYo/wTh,,,N,0,0,,,2007-02-01 02:42,2007-02-04 01:05,hbe4678,hbe4678,,,0
1533,12457714,14517,6816013,13331,1,100,N,N,N,CP_Units,TT_Task,DT_FixedDUR2,RV_OK,TK_Complete,EM05UPI141,05U Model Review Mtg,,,,0,0,0,0,16,0,0,0,,2006-02-27 00:00,2006-02-28 00:00,2007-02-07 08:01,2007-02-07 08:01,,2007-01-27 00:00,2007-01-27 00:00,,,2006-03-20 08:00,2006-03-22 17:00,,,,,PT_Normal,,,,,Hwrkbfl7QzWAd5rmn6KWhA,Aya+axO3MUm0iJ1gfuvY/h,,,N,0,0,,,2007-02-01 02:42,2007-02-04 01:05,hbe4678,hbe4678,,,0
1534,12457715,14517,6816013,13331,1,100,N,N,N,CP_Units,TT_Task,DT_FixedDUR2,RV_OK,TK_Complete,EM05UPI186,05U Planning Release,,,,0,0,0,0,40,0,0,0,,2006-03-03 00:00,2006-03-08 00:00,2007-02-07 08:01,2007-02-07 08:01,,2007-01-27 00:00,2007-01-27 00:00,,,2006-03-30 08:00,2006-04-05 17:00,,,,,PT_Normal,,,,,vY/mrqO8TmCbX0blgg3yAQ,AGdEXDYXeU2Mi26xOnAn4h,,,N,0,0,,,2007-02-01 02:42,2007-02-04 01:05,hbe4678,hbe4678,,,0
1535,12457716,14517,6816013,13331,1,100,N,N,N,CP_Units,TT_Task,DT_FixedDUR2,RV_OK,TK_Complete,EM05UPI190,05U U/G Iso Issue IFC - HDPE Piping (FW),,,,0,0,0,0,40,0,0,0,,2006-03-27 08:00,2006-03-31 17:00,2007-08-07 08:01,2007-08-07 08:01,,2007-01-27 00:00,2007-01-27 00:00,,,2006-03-27 08:00,2006-03-31 17:00,,,,,PT_Normal,,,,,LeQXz1BtQ0CX05fF5ng8Hg,TC8OcZqfUEGVwh6hSHI8KR,,,N,0,0,,,2007-02-01 02:42,2007-02-04 01:05,hbe4678,hbe4678,,,0
1536,12457717,14517,6816013,13331,1,100,N,N,N,CP_Units,TT_Task,DT_FixedDUR2,RV_OK,TK_Complete,EM05API200,05A Equipment Location Plans,,,,0,0,0,0,336,0,0,0,,2006-02-27 08:00,2006-08-25 00:00,2007-02-07 08:01,2007-02-07 08:01,,2007-01-27 00:00,2007-01-27 00:00,,,2006-02-27 08:00,2006-04-28 17:00,,,,,PT_Normal,,,,,EZ0RLWouRTSwf0w+ozGsnA,iS+EauQXrkuUT/RZPDUOMQ,,,N,0,0,,,2007-02-01 02:42,2007-02-04 01:05,hbe4678,hbe4678,,,0
1537,12457718,14517,6816013,13331,1,0,N,N,N,CP_Units,TT_Task,DT_FixedDUR2,RV_OK,TK_NotStart,EM05BPI200,05B Equipment Location Plans,,1768.01666666667,0,40,0,0,0,40,0,0,0,,,,2007-12-25 08:01,2008-01-01 08:01,,2007-02-19 08:00,2007-02-23 17:00,2007-02-19 08:00,2007-02-23 17:00,2007-02-19 08:00,2007-02-23 17:00,,2007-12-25 08:01,2008-01-01 08:01,,PT_Normal,,,,,r2iAKB9DRiunGMJvUHbZbg,hFIVDWxWSE2V2LJVxfFa5A,,,N,0,0,,,2007-02-01 02:42,2007-02-04 01:00,hbe4678,hbe4678,2007-02-19 08:00,2007-02-23 17:00,40
1538,12457719,14517,6816013,13331,1,100,N,N,N,CP_Units,TT_Task,DT_FixedDUR2,RV_OK,TK_Complete,EM05UPI191,05U U/G Plan Dwgs IFC,,,,0,0,0,0,40,0,0,0,,2006-05-15 08:00,2006-08-22 17:00,2007-08-07 08:01,2007-08-07 08:01,,2007-01-27 00:00,2007-01-27 00:00,,,2006-05-15 08:00,2006-05-19 17:00,,,,,PT_Normal,,,,,txtlIulIQ6GuF3un6iqRUQ,1v/wGC+4j0+Opdu7MYhYWx,,,N,0,0,,,2007-02-01 02:42,2007-02-04 01:05,hbe4678,hbe4678,,,0
1539,12457720,14517,6816013,13331,1,100,N,N,N,CP_Units,TT_Task,DT_FixedDUR2,RV_OK,TK_Complete,EM05UPI176,05U IDP - Plant Layout,,,,0,0,0,0,40,0,0,0,,2006-03-01 00:00,2006-03-03 00:00,2007-02-07 08:01,2007-02-07 08:01,,2007-01-27 00:00,2007-01-27 00:00,,,2006-03-23 08:00,2006-03-29 17:00,,,,,PT_Normal,,,,,wVrrZxTXQ4aODIrL0tuKIg,+Vv6ws79zE6y3s0eV7Xx7h,,,N,0,0,,,2007-02-01 02:42,2007-02-04 01:05,hbe4678,hbe4678,,,0
1540,12457721,14517,6816013,13331,1,100,N,N,N,CP_Units,TT_Task,DT_FixedDUR2,RV_OK,TK_Complete,EM05UPI177,05U Detail Model Development,,,,0,0,0,0,240,0,0,0,,2006-03-08 00:00,2006-03-14 00:00,2007-02-07 08:01,2007-02-07 08:01,,2007-01-27 00:00,2007-01-27 00:00,,,2006-04-06 08:00,2006-05-22 17:00,,,,,PT_Normal,,,,,lWswyZVUR2S9rlDp3EXqkw,PV/DGQkNS0GOsmYQNaD5ix,,,N,0,0,,,2007-02-01 02:42,2007-02-04 01:05,hbe4678,hbe4678,,,0
1541,12457722,14517,6816013,13331,1,100,N,N,N,CP_Units,TT_Task,DT_FixedDUR2,RV_OK,TK_Complete,EM05UPI178,05U IDP - Detail Design - HDPE Piping (FW),,,,0,0,0,0,40,0,0,0,,2006-03-14 00:00,2006-03-20 00:00,2007-02-07 08:01,2007-02-07 08:01,,2007-01-27 00:00,2007-01-27 00:00,,,2006-04-24 08:00,2006-04-28 17:00,,,,,PT_Normal,,,,,mGtHcJuMRISZpXo/hyeqNg,u866EkU9+keOsS7+/TOKQh,,,N,0,0,,,2007-02-01 02:42,2007-02-04 01:05,hbe4678,hbe4678,,,0
1542,12457723,14517,6816013,13331,1,100,N,N,N,CP_Units,TT_Task,DT_FixedDUR2,RV_OK,TK_Complete,EM05API120,05A Plant Layout Model,,,,0,0,0,0,480,0,0,0,,2005-12-19 08:00,2006-03-28 00:00,2007-01-09 08:01,2007-01-09 08:01,,2007-01-27 00:00,2007-01-27 00:00,,,2005-12-19 08:00,2006-03-17 17:00,,,,,PT_Normal,,,,,iMbXevR1Qg+KwtYklPow/A,NKb8JIDnvkGrzV0Xn6QfzB,,,N,0,0,,,2007-02-01 02:42,2007-02-04 01:05,hbe4678,hbe4678,,,0
1543,12457724,14517,6816013,13331,1,100,N,N,N,CP_Units,TT_Task,DT_FixedDUR2,RV_OK,TK_Complete,EM05API130,05A Model Review Mtg,,,,0,0,0,0,16,0,0,0,,2006-06-22 08:00,2006-06-22 08:00,2007-01-09 08:01,2007-01-09 08:01,,2007-01-27 00:00,2007-01-27 00:00,,,2006-06-22 08:00,2006-06-23 17:00,,,,,PT_Normal,,,,,k8lEut6lTEimD0lmLXPhMg,HGwxG6vu0UOcfvB5eNAOyh,,,N,0,0,,,2007-02-01 02:42,2007-02-04 01:05,hbe4678,hbe4678,,,0
1544,12457725,14517,6816013,13331,1,100,N,N,N,CP_Units,TT_Task,DT_FixedDUR2,RV_OK,TK_Complete,EM05API132,05A Planning Release,,,,0,0,0,0,8,0,0,0,,2006-09-08 00:00,2006-09-08 00:00,2007-01-09 08:01,2007-01-09 08:01,,2007-01-27 00:00,2007-01-27 00:00,,,2006-09-13 08:00,2006-09-13 17:00,,,,,PT_Normal,,,,,iFsV7T/XSJKH4g+mdoA9fw,kf3NOxESYEykPWcve2GdIx,,,N,0,0,,,2007-02-01 02:42,2007-02-04 01:05,hbe4678,hbe4678,,,0
1545,12457726,14517,6816013,13331,1,100,N,N,N,CP_Units,TT_Task,DT_FixedDUR2,RV_OK,TK_Complete,EM05API134,05A Detail Model Development,,,,0,0,0,0,240,0,0,0,,2006-09-11 00:00,2006-09-12 00:00,2007-03-05 08:00,2007-03-05 08:00,,2007-01-27 00:00,2007-01-27 00:00,,,2006-09-14 08:00,2006-10-25 17:00,,,,,PT_Normal,,,,,1zn+W6sDTqmqOnFsjgNPcA,uO5oxY6PkEOZ+fDzfHHwfx,,,N,0,0,,,2007-02-01 02:42,2007-02-04 01:05,hbe4678,hbe4678,,,0
1546,12457727,14517,6816013,13331,1,100,N,N,N,CP_Units,TT_Task,DT_FixedDUR2,RV_OK,TK_Active,EM05API135,05A A/G Piping Iso's - Issue IFC,,720,0,40,0,0,0,120,0,0,0,,2006-09-25 08:00,,2007-06-04 08:00,2007-06-08 17:00,2007-02-02 17:00,2007-01-29 08:00,2007-02-02 17:00,2007-01-29 08:00,2007-02-02 17:00,2006-09-25 08:00,2006-10-13 17:00,,2007-06-04 08:00,2007-06-08 17:00,,PT_Normal,,,,,pZGaFWtxQAOIv2ACH7fxEg,eFVzGIgr1kS0RvX+T6mxfB,,,N,0,0,,,2007-02-01 02:42,2007-02-01 02:43,hbe4678,hbe4678,2007-01-29 08:00,2007-02-02 17:00,40
1547,12457728,14517,6816013,13331,1,100,N,N,N,CP_Units,TT_Task,DT_FixedDUR2,RV_OK,TK_Active,EM05API138,05A Design / Issue Pipe Supports IFC,,1296.01666666667,0,40,0,0,0,360,0,0,0,,2006-09-25 08:00,,2007-09-12 08:01,2007-09-19 08:01,2007-02-02 17:00,2007-01-29 08:00,2007-02-02 17:00,2007-01-29 08:00,2007-02-02 17:00,2006-09-25 08:00,2006-11-28 17:00,,2007-09-12 08:01,2007-09-19 08:01,,PT_Normal,,,,,AWzKNdOyTi+2ceghY8gokw,n5a77AzK+E6Gf2zKSie7gh,,,N,0,0,,,2007-02-01 02:42,2007-02-04 01:00,hbe4678,hbe4678,2007-01-29 08:00,2007-02-02 17:00,40
1548,12457729,14517,6816013,13331,1,100,N,N,N,CP_Units,TT_Task,DT_FixedDUR2,RV_OK,TK_Complete,EM05BPI120,05B Plant Layout Model,,,,0,0,0,0,160,0,0,0,2006-11-27 00:00,2006-11-27 08:00,2006-12-01 17:00,2007-05-14 08:00,2007-05-14 08:00,,2007-01-27 00:00,2007-01-27 00:00,,,2006-11-27 08:00,2006-12-26 17:00,,,,CS_MSOA,PT_Normal,,,,,9NjzsEpeTmad2iMUCX+ftQ,Psfj1pLy+UqAx8rrEomsrx,,,N,0,0,,,2007-02-01 02:42,2007-02-04 01:05,hbe4678,hbe4678,,,0
1549,12457730,14517,6816013,13331,1,100,N,N,N,CP_Units,TT_Task,DT_FixedDUR2,RV_OK,TK_Complete,EM05BPI130,05B Model Review Mtg,,,,0,0,0,0,8,0,0,0,,2006-12-01 08:00,2006-12-01 17:00,2007-05-14 08:00,2007-05-14 08:00,,2007-01-27 00:00,2007-01-27 00:00,,,2006-12-01 08:00,2006-12-01 17:00,,,,,PT_Normal,,,,,Zq+pEHcmStGkCquzq6oHxA,cWi4P1eikUKxW5M6eOkLmB,,,N,0,0,,,2007-02-01 02:42,2007-02-04 01:05,hbe4678,hbe4678,,,0
1550,12457731,14517,6816013,13331,1,0,N,N,N,CP_Units,TT_Task,DT_FixedDUR2,RV_OK,TK_NotStart,EM05BPI132,05B Planning Release,,600,0,40,0,0,0,40,0,0,0,,,,2007-06-04 08:00,2007-06-08 17:00,,2007-02-19 08:00,2007-02-23 17:00,2007-02-19 08:00,2007-02-23 17:00,2007-02-19 08:00,2007-02-23 17:00,,2007-06-04 08:00,2007-06-08 17:00,,PT_Normal,,,,,338eBF+PSBaw4+Wnm8MSvg,uB/BB1qMdkeTR6xidsQrVh,,,N,0,0,,,2007-02-01 02:42,2007-02-01 02:43,hbe4678,hbe4678,2007-02-19 08:00,2007-02-23 17:00,40
1551,12457732,14517,6816013,13331,1,0,N,N,N,CP_Units,TT_Task,DT_FixedDUR2,RV_OK,TK_NotStart,EM05BPI134,05B Detail Model Development,,600,0,40,0,0,0,80,0,0,0,,,,2007-06-11 08:00,2007-06-15 17:00,,2007-02-26 08:00,2007-03-02 17:00,2007-02-26 08:00,2007-03-02 17:00,2007-02-26 08:00,2007-03-09 17:00,,2007-06-11 08:00,2007-06-15 17:00,,PT_Normal,,,,,NUqneGWNSOCnBD1EEfZc8g,upWoM+RQAUepDT/jue03hh,,,N,0,0,,,2007-02-01 02:42,2007-02-01 02:43,hbe4678,hbe4678,2007-02-26 08:00,2007-03-02 17:00,40
1552,12457733,14517,6816013,13331,1,0,N,N,N,CP_Units,TT_Task,DT_FixedDUR2,RV_OK,TK_NotStart,EM05BPI135,05B A/G Piping Iso's - Issue IFC,,600,0,48,0,0,0,80,0,0,0,,,,2007-06-29 08:00,2007-07-06 17:00,,2007-03-16 08:00,2007-03-23 17:00,2007-03-16 08:00,2007-03-23 17:00,2007-03-16 08:00,2007-03-29 17:00,,2007-06-29 08:00,2007-07-06 17:00,,PT_Normal,,,,,gD07F0ijSMeJGIB0okJrMQ,3Qdk36rezk2vwJz8KIHQmB,,,N,0,0,,,2007-02-01 02:42,2007-02-01 02:43,hbe4678,hbe4678,2007-03-16 08:00,2007-03-23 17:00,48
1553,12457734,14517,6816013,13331,1,0,N,N,N,CP_Units,TT_Task,DT_FixedDUR2,RV_OK,TK_NotStart,EM05BPI138,05B Design / Issue Pipe Supports IFC,,1840,664,48,0,0,0,80,0,0,0,,,,2008-02-01 08:00,2008-02-08 17:00,,2007-03-16 08:00,2007-03-23 17:00,2007-03-16 08:00,2007-03-23 17:00,2007-03-16 08:00,2007-03-29 17:00,,2008-02-01 08:00,2008-02-08 17:00,,PT_Normal,,,,,tNM58SddSGypiu4DF7BU5g,1ctjIKhGeEqG3srMCr/SgR,,,N,0,0,,,2007-02-01 02:42,2007-02-01 02:43,hbe4678,hbe4678,2007-03-16 08:00,2007-03-23 17:00,48
1554,12457735,14517,6816013,13331,1,100,N,N,N,CP_Units,TT_Task,DT_FixedDUR2,RV_OK,TK_Complete,EM05API133,05A IDP - Plant Layout,,,,0,0,0,0,16,0,0,0,,2006-08-22 08:00,2006-09-08 00:00,2007-01-09 08:01,2007-01-09 08:01,,2007-01-27 00:00,2007-01-27 00:00,,,2006-08-22 08:00,2006-08-23 17:00,,,,,PT_Normal,,,,,2BKXQbcRTwSNvejtcUu9Og,Vy9PRS4040qo8tl+JrOWRx,,,N,0,0,,,2007-02-01 02:42,2007-02-04 01:05,hbe4678,hbe4678,,,0
1555,12457736,14517,6816013,13331,1,100,N,N,N,CP_Units,TT_Task,DT_FixedDUR2,RV_OK,TK_Complete,EM05API136,05A IDP - Detail Design,,,,0,0,0,0,16,0,0,0,,2006-10-06 08:00,2006-11-27 17:00,2007-03-05 08:00,2007-03-05 08:00,,2007-01-27 00:00,2007-01-27 00:00,,,2006-10-06 08:00,2006-10-09 17:00,,,,,PT_Normal,,,,,wOTPYyA/T6eFw+XWSdlosg,vI0Qzy/7602Yp6TMv55KjB,,,N,0,0,,,2007-02-01 02:42,2007-02-04 01:05,hbe4678,hbe4678,,,0
1556,12457737,14517,6816013,13331,1,0,N,N,N,CP_Units,TT_Task,DT_FixedDUR2,RV_OK,TK_NotStart,EM05BPI133,05B IDP - Plant Layout,,600,0,16,0,0,0,16,0,0,0,,,,2007-05-28 08:00,2007-05-29 17:00,,2007-02-12 08:00,2007-02-13 17:00,2007-02-12 08:00,2007-02-13 17:00,2007-02-12 08:00,2007-02-13 17:00,,2007-05-28 08:00,2007-05-29 17:00,,PT_Normal,,,,,rWjLcOeyQ067FJNWueXHAQ,Vy9PRS4040qo8tl+JrOWRx,,,N,0,0,,,2007-02-01 02:42,2007-02-01 02:43,hbe4678,hbe4678,2007-02-12 08:00,2007-02-13 17:00,16
1557,12457738,14517,6816016,13330,0,100,N,N,N,CP_Units,TT_FinMile,DT_FixedDUR2,RV_OK,TK_Complete,EM5ASY172,05A P&IDs & Line List Issue - IFD,,,,0,0,0,0,0,0,0,0,,2006-08-16 17:00,2006-08-16 17:00,2007-03-05 08:00,2007-03-05 08:00,,2007-01-27 00:00,2007-01-27 00:00,,,2006-08-16 17:00,2006-08-16 17:00,,,,,PT_Normal,,,,,iZj6AiMKRKi/S9Wjk3ueeQ,W00Kdb866k6f5VG7ymzVhB,,,N,0,0,,,2007-02-01 02:42,2007-02-04 01:05,hbe4678,hbe4678,,,0
1558,12457739,14517,6816016,13330,1,100,N,N,N,CP_Units,TT_Task,DT_FixedDUR2,RV_OK,TK_Complete,EM05BSY172,05B P&IDs & Line List Issue - IFD,,,,0,0,0,0,88,0,0,0,,2006-11-27 08:00,2006-12-15 17:00,2007-06-18 08:00,2007-06-18 08:00,,2007-01-27 00:00,2007-01-27 00:00,,,2006-11-27 08:00,2006-12-11 17:00,,,,,PT_Normal,,,,,hqG6x3xeTniEZKCGahF9ow,CvcaMHb1M0az7BHPGCcNax,,,N,0,0,,,2007-02-01 02:42,2007-02-04 01:05,hbe4678,hbe4678,,,0
1559,12457740,14517,6816016,13330,0,0,N,N,N,CP_Units,TT_FinMile,DT_FixedDUR2,RV_OK,TK_NotStart,EM5ASY272,05A P&IDs & Line List Issue - IFC,,1312.01666666667,16,0,0,0,0,0,0,0,0,2007-01-31 17:00,,,2007-09-19 08:01,2007-09-19 08:01,,2007-01-31 17:00,2007-01-31 17:00,2007-01-31 17:00,2007-01-31 17:00,2007-01-31 17:00,2007-01-31 17:00,,2007-09-19 08:01,2007-09-19 08:01,CS_MEOA,PT_Normal,,,,,YnHGpSYfT9y9YaWULlK73A,CvcaMHb1M0az7BHPGCcNax,,,N,0,0,,,2007-02-01 02:42,2007-02-04 01:00,hbe4678,hbe4678,2007-01-31 17:00,2007-01-31 17:00,0
1560,12457741,14517,6816016,13330,0,0,N,N,N,CP_Units,TT_FinMile,DT_FixedDrtn,RV_OK,TK_NotStart,EM5BSY272,05B P&IDs & Line List Issue - IFC,,2136,960,0,0,0,0,0,0,0,0,2007-01-31 17:00,,,2008-02-08 17:00,2008-02-08 17:00,,2007-01-31 17:00,2007-01-31 17:00,2007-01-31 17:00,2007-01-31 17:00,2007-01-31 17:00,2007-01-31 17:00,,2008-02-08 17:00,2008-02-08 17:00,CS_MEOA,PT_Normal,,,,,sopE87S5R2W6KIeV5YeSPg,+CN0JPM7h0iZiqmOwNVmMB,,,N,0,0,,,2007-02-01 02:42,2007-02-01 02:43,hbe4678,hbe4678,2007-01-31 17:00,2007-01-31 17:00,0
1561,12457742,14517,6816022,13330,1,100,N,N,N,CP_Units,TT_Task,DT_FixedDUR2,RV_OK,TK_Complete,EM05ACV130,05A Design & Model Structural Piperack Fdns,,,,0,0,0,0,200,0,0,0,,2006-01-02 08:00,2006-03-27 00:00,2007-07-19 08:01,2007-07-19 08:01,,2007-01-27 00:00,2007-01-27 00:00,,,2006-01-03 08:00,2006-02-06 17:00,,,,,PT_Normal,,,,,uaoZQ+3hS+err58FymlB6g,X4oOx+gYjk6oWpnzWCQwbx,,,N,0,0,,,2007-02-01 02:42,2007-02-04 01:05,hbe4678,hbe4678,,,0
1562,12457743,14517,6816022,13330,1,0,N,N,N,CP_Units,TT_Task,DT_FixedDUR2,RV_OK,TK_NotStart,EM05ACV133,05A Update Model Structural Piperack Fdns & Issue Dwgs - IFC,,968.016666666667,680,64,0,0,0,80,0,0,0,,,,2007-07-19 08:01,2007-07-31 08:01,,2007-01-31 08:00,2007-02-09 17:00,2007-01-31 08:00,2007-02-09 17:00,2007-01-31 08:00,2007-02-13 17:00,,2007-07-19 08:01,2007-07-31 08:01,,PT_Normal,,,,,3RlZtoaER2y5Zo6biuDCZg,n60pY8KP/UKPFw5ohOe3pB,,,N,0,0,,,2007-02-01 02:42,2007-02-04 01:00,hbe4678,hbe4678,2007-01-31 08:00,2007-02-09 17:00,64
1563,12457744,14517,6816022,13330,1,0,N,N,N,CP_Units,TT_Task,DT_FixedDUR2,RV_OK,TK_Active,EM05BCV122,05B Design / Model / IFC - Sleeper Steel & FDN's,,568.016666666667,0,160,0,0,0,320,0,0,0,,2007-01-22 08:00,,2007-05-08 08:01,2007-06-05 08:01,,2007-01-29 08:00,2007-02-23 17:00,2007-01-29 08:00,2007-02-23 17:00,2007-01-22 08:00,2007-03-16 17:00,,2007-05-08 08:01,2007-06-05 08:01,,PT_Normal,,,,,BUrt4iwQRLa80/0ORb47Sw,E2Mwyao9IUm2JIhzhS9ohR,,,N,0,0,,,2007-02-01 02:42,2007-02-04 01:00,hbe4678,hbe4678,2007-01-29 08:00,2007-02-23 17:00,160
1564,12457745,14517,6816022,13330,1,0,N,N,N,CP_Units,TT_Task,DT_FixedDUR2,RV_OK,TK_Active,EM05BCV133,05B Design / Model / IFC - S/S at Jetty,,568.016666666667,0,160,0,0,0,280,0,0,0,,2007-01-22 08:00,,2007-05-08 08:01,2007-06-05 08:01,,2007-01-29 08:00,2007-02-23 17:00,2007-01-29 08:00,2007-02-23 17:00,2007-01-22 08:00,2007-03-09 17:00,,2007-05-08 08:01,2007-06-05 08:01,,PT_Normal,,,,,ACbIhxtFQgu3FE8cpBANGQ,N/Bza1o2Z025C9P594a9ex,,,N,0,0,,,2007-02-01 02:42,2007-02-04 01:00,hbe4678,hbe4678,2007-01-29 08:00,2007-02-23 17:00,160
1565,12457746,14517,6816022,13330,1,100,N,N,N,CP_Units,TT_Task,DT_FixedDUR2,RV_OK,TK_Complete,EK000MF32D,05A MF312  2105-F Water Tank - Fdn Dwgs - IFC,,,,0,0,0,0,160,0,0,0,,2006-08-02 08:00,2006-12-22 17:00,2007-08-07 08:01,2007-08-07 08:01,,2007-01-27 00:00,2007-01-27 00:00,,,2006-08-02 08:00,2006-08-29 17:00,,,,,PT_Normal,,,,,hOUEDQyzRTSfCeIysuq9vw,Xwa6UiIM7kCHv9r/PiK3Yx,,,N,0,0,,,2007-02-01 02:42,2007-02-04 01:05,hbe4678,hbe4678,,,0
1566,12457747,14517,6816022,13330,1,100,N,N,N,CP_Units,TT_Task,DT_FixedDUR2,RV_OK,TK_Complete,EM05ACV120,05A Design & Model PR Structural Steel,,,,0,0,0,0,160,0,0,0,,2005-12-22 08:00,2006-03-28 17:00,2007-01-09 08:01,2007-01-09 08:01,,2007-01-27 00:00,2007-01-27 00:00,,,2005-12-22 08:00,2006-01-20 17:00,,,,,PT_Normal,,,,,8Ei/Ney0RJ+Cyeg/gSgPgg,+7A+JXJSF0KPDW5PfaPKmB,,,N,0,0,,,2007-02-01 02:42,2007-02-04 01:05,hbe4678,hbe4678,,,0
1567,12457748,14517,6816022,13330,1,0,N,N,N,CP_Units,TT_Task,DT_FixedDUR2,RV_OK,TK_Active,EM05ACV122,05A Update Model PR Struct Steel & Issue Dwgs - IFC,,168.016666666667,0,80,0,0,0,80,0,0,0,,2006-12-26 08:00,,2007-02-27 08:01,2007-03-13 08:01,2007-02-09 17:00,2007-01-29 08:00,2007-02-09 17:00,2007-01-29 08:00,2007-02-09 17:00,2006-12-26 08:00,2007-01-08 17:00,,2007-02-27 08:01,2007-03-13 08:01,,PT_Normal,,,,,pwMsAwUST42IRtFo5wB+Xg,qmMLLP5EYkSIclbyqiaBXh,,,N,0,0,,,2007-02-01 02:42,2007-02-04 01:00,hbe4678,hbe4678,2007-01-29 08:00,2007-02-09 17:00,80
1568,12457749,14517,6816022,13330,1,100,N,N,N,CP_Units,TT_Task,DT_FixedDUR2,RV_OK,TK_Complete,EM05ACV126,05A Conceptual Misc. Steel Design/ Model,,,,0,0,0,0,160,0,0,0,,2006-09-18 08:00,2006-12-01 00:00,2007-03-05 08:00,2007-03-05 08:00,,2007-01-27 00:00,2007-01-27 00:00,,,2006-09-18 08:00,2006-10-13 17:00,,,,,PT_Normal,,,,,+rjnCQ4rT7alirt3LR4Bmw,YRjS2jTm+kug+onoGb5vwx,,,N,0,0,,,2007-02-01 02:42,2007-02-04 01:05,hbe4678,hbe4678,,,0
1569,12457750,14517,6816022,13330,1,0,N,N,N,CP_Units,TT_Task,DT_FixedDUR2,RV_OK,TK_Active,EM05ACV127,05A Model Misc. Steel & Issue Dwgs - IFC,,200,0,80,0,0,0,40,0,0,0,2006-12-18 00:00,2006-12-26 08:00,,2007-03-05 08:00,2007-03-16 17:00,2007-02-09 17:00,2007-01-29 08:00,2007-02-09 17:00,2007-01-29 08:00,2007-02-09 17:00,2006-12-26 08:00,2007-01-01 17:00,,2007-03-05 08:00,2007-03-16 17:00,CS_MSOA,PT_Normal,,,,,v7ymUqmkRuWf7DOQfJLh0w,o6BErCsB2EymsfSC4uYYSx,,,N,0,0,,,2007-02-01 02:42,2007-02-04 01:02,hbe4678,hbe4678,2007-01-29 08:00,2007-02-09 17:00,80
1570,12457751,14517,6816022,13330,1,100,N,N,N,CP_Units,TT_Task,DT_FixedDUR2,RV_OK,TK_Complete,EM05ACV160,05A Design & Model Major Eq. Fdns,,,,0,0,0,0,200,0,0,0,,2006-02-03 00:00,2006-07-28 17:00,2007-01-09 08:01,2007-01-09 08:01,,2007-01-27 00:00,2007-01-27 00:00,,,2006-02-27 08:00,2006-03-31 17:00,,,,,PT_Normal,,,,,wbSTxMQ8RXqH4IfFneg8ew,KU5afkOFC0eFyBzY+yGCxR,,,N,0,0,,,2007-02-01 02:42,2007-02-04 01:05,hbe4678,hbe4678,,,0
1571,12457752,14517,6816022,13330,1,100,N,N,N,CP_Units,TT_Task,DT_FixedDUR2,RV_OK,TK_Active,EM05ACV164,05A Update Model Major Eq. Fdns & Issue Dwgs-IFC,,-111.983333333333,232,168,0,0,0,80,0,0,0,,2006-09-21 08:00,,2007-01-09 08:01,2007-02-07 08:01,,2007-01-29 08:00,2007-02-26 17:00,2007-01-29 08:00,2007-02-26 17:00,2006-09-21 08:00,2006-10-04 17:00,,2007-01-09 08:01,2007-02-07 08:01,,PT_Normal,,,,,kqaM8Is0Qj2o9k/Q+Mw2cw,WoYHspjVlkWQ0Cb+Wt1Mhx,,,N,0,0,,,2007-02-01 02:42,2007-02-04 01:00,hbe4678,hbe4678,2007-01-29 08:00,2007-02-26 17:00,168
1572,12457753,14517,6816022,13330,1,100,N,N,N,CP_Units,TT_Task,DT_FixedDUR2,RV_OK,TK_Complete,EM05ACV166,05A Conceptual Misc. Foundation Design/  Model,,,,0,0,0,0,120,0,0,0,,2006-09-18 08:00,2006-12-01 00:00,2007-07-19 08:01,2007-07-19 08:01,,2007-01-27 00:00,2007-01-27 00:00,,,2006-09-18 08:00,2006-10-06 17:00,,,,,PT_Normal,,,,,TyZFpI9CSe2lD7o42y1PIA,mQxkFxLDOUmJqBVlSm8fCB,,,N,0,0,,,2007-02-01 02:42,2007-02-04 01:05,hbe4678,hbe4678,,,0
1573,12457754,14517,6816022,13330,1,0,N,N,N,CP_Units,TT_Task,DT_FixedDUR2,RV_OK,TK_Active,EM05ACV167,05A Update Model Misc Fdns & Issue Dwgs - IFC,,888.016666666667,600,64,0,0,0,40,0,0,0,,2006-12-26 08:00,,2007-07-19 08:01,2007-07-31 08:01,,2007-02-14 08:00,2007-02-23 17:00,2007-02-14 08:00,2007-02-23 17:00,2006-12-26 08:00,2007-01-01 17:00,,2007-07-19 08:01,2007-07-31 08:01,,PT_Normal,,,,,pUrcxgQWTQ6raGTdfE5vDQ,ijHw6BhBXkulSQsKeOYcmB,,,N,0,0,,,2007-02-01 02:42,2007-02-04 01:00,hbe4678,hbe4678,2007-02-14 08:00,2007-02-23 17:00,64
1574,12457755,14517,6816022,13330,1,0,N,N,N,CP_Units,TT_Task,DT_FixedDUR2,RV_OK,TK_Active,EM05BCV167,05B Design / Model / IFC -  Equip. Fdn's.,,1768.01666666667,0,0,0,0,0,320,0,0,0,,2007-01-18 08:00,,2007-12-25 08:01,2007-12-25 08:01,2007-02-16 17:00,2007-02-19 08:00,2007-02-19 08:00,2007-02-19 08:00,2007-02-19 08:00,2007-01-18 08:00,2007-03-14 17:00,,2007-12-25 08:01,2007-12-25 08:01,,PT_Normal,,,,,L9s83bJHToKuOcu4ul+3lw,66pMtSZFwEKaIeN9lXzt3B,,,N,0,0,,,2007-02-01 02:42,2007-02-04 01:00,hbe4678,hbe4678,2007-02-19 08:00,2007-02-19 08:00,0
1575,12457756,14517,6816023,13330,1,100,N,N,N,CP_Units,TT_Task,DT_FixedDUR2,RV_OK,TK_Complete,EM05AEL120,05A Electrical Conceptual Layouts,,,,0,0,0,0,200,0,0,0,,2006-01-16 08:00,2006-03-22 00:00,2007-01-09 08:01,2007-01-09 08:01,,2007-01-27 00:00,2007-01-27 00:00,,,2006-01-16 08:00,2006-02-17 17:00,,,,,PT_Normal,,,,,kHFFTbRdROKOb1RXW042NQ,LDjwKPaRC0exLh7Y9Smkcx,,,N,0,0,,,2007-02-01 02:42,2007-02-04 01:05,hbe4678,hbe4678,,,0
1576,12457757,14517,6816023,13330,1,100,N,N,N,CP_Units,TT_Task,DT_FixedDUR2,RV_OK,TK_Complete,EM05BEL120,05B Electrical Conceptual Layouts,,,,0,0,0,0,168,0,0,0,,2006-05-22 00:00,2006-06-06 00:00,2007-05-14 08:00,2007-05-14 08:00,,2007-01-27 00:00,2007-01-27 00:00,,,2006-06-09 08:00,2006-07-07 17:00,,,,,PT_Normal,,,,,sg2kfsm9T6yye/1nPmTr3g,/Sb/vs4WaESYdzeEiXwOKB,,,N,0,0,,,2007-02-01 02:42,2007-02-04 01:05,hbe4678,hbe4678,,,0
1577,12457758,14517,6816030,13330,1,100,N,N,N,CP_Units,TT_Task,DT_FixedDUR2,RV_OK,TK_Complete,EM01HCV128,01H Update Model Substation Fdns & Issue Dwgs - IFC,,,,0,0,0,0,120,0,0,0,,2006-11-01 00:00,2006-11-17 00:00,2007-07-16 08:01,2007-07-16 08:01,,2007-01-27 00:00,2007-01-27 00:00,,,2006-10-30 08:00,2006-11-17 17:00,,,,,PT_Normal,,,,,BBjVtQPXRZCFx8LtiuFcSQ,068N0whOXUasGrjGj7toUh,,,N,0,0,,,2007-02-01 02:42,2007-02-04 01:05,hbe4678,hbe4678,,,0
1578,12457759,14517,6816030,13330,1,100,N,N,N,CP_Units,TT_Task,DT_FixedDUR2,RV_OK,TK_Complete,EM01HCV160,01H Design & Model Major Eq. Fdns,,,,0,0,0,0,200,0,0,0,,2006-11-01 08:00,2006-11-17 17:00,2007-06-06 08:01,2007-06-06 08:01,,2007-01-27 00:00,2007-01-27 00:00,,,2006-11-01 08:00,2006-12-05 17:00,,,,,PT_Normal,,,,,vpPZUsCbQZepdONhC8HL9w,3i5ePjFLIUW3YP6BAGKADB,,,N,0,0,,,2007-02-01 02:42,2007-02-04 01:05,hbe4678,hbe4678,,,0
1579,12457760,14517,6816030,13330,1,100,N,N,N,CP_Units,TT_Task,DT_FixedDUR2,RV_OK,TK_Complete,EM01HCV164,01H Update Model Major Eq. Fdns & Issue Dwgs-IFC,,,,0,0,0,0,120,0,0,0,,2006-11-01 08:00,2006-11-17 17:00,2007-06-06 08:01,2007-06-06 08:01,,2007-01-27 00:00,2007-01-27 00:00,,,2006-11-01 08:00,2006-11-21 17:00,,,,,PT_Normal,,,,,O00QFUB9R7yWbHiFQbtgOA,o08P+4+XKkO12FsdY6sVex,,,N,0,0,,,2007-02-01 02:42,2007-02-04 01:05,hbe4678,hbe4678,,,0
1580,12457761,14517,6816030,13330,1,100,N,N,N,CP_Units,TT_Task,DT_FixedDUR2,RV_OK,TK_Complete,EM01HCV166,01H Conceptual Misc. Foundation Design/ Model,,,,0,0,0,0,120,0,0,0,2006-11-27 00:00,2006-12-04 08:00,2006-12-15 00:00,2007-11-13 08:01,2007-11-13 08:01,,2007-01-27 00:00,2007-01-27 00:00,,,2006-12-04 08:00,2006-12-22 17:00,,,,CS_MSOA,PT_Normal,,,,,aRW8BPbfRv+Bum90BOF5Mg,QOWgnxt770iK7iChtpDlDB,,,N,0,0,,,2007-02-01 02:42,2007-02-04 01:05,hbe4678,hbe4678,,,0
1581,12457762,14517,6816030,13330,1,100,N,N,N,CP_Units,TT_Task,DT_FixedDUR2,RV_OK,TK_Complete,EM01HCV167,01H Model Misc Fdns & Issue Dwgs - IFC,,,,0,0,0,0,40,0,0,0,,2006-12-18 08:00,2007-01-26 17:00,2007-11-13 08:01,2007-11-13 08:01,,2007-01-27 00:00,2007-01-27 00:00,,,2006-12-18 08:00,2006-12-22 17:00,,,,,PT_Normal,,,,,EJ3uQw1MRo+B7h7KzQ5zGw,+yVy+0Ic/0e7Qmsdi8oxoh,,,N,0,0,,,2007-02-01 02:42,2007-02-04 01:05,hbe4678,hbe4678,,,0
1582,12457763,14517,6816030,13330,1,100,N,N,N,CP_Units,TT_Task,DT_FixedDUR2,RV_OK,TK_Complete,EM01JCV130,01J Design & Model Metering Enclosure Fdns,,,,0,0,0,0,160,0,0,0,,2006-05-01 00:00,2006-05-10 00:00,2007-07-02 08:00,2007-07-02 08:00,,2007-01-27 00:00,2007-01-27 00:00,,,2006-05-12 08:00,2006-06-08 17:00,,,,,PT_Normal,,,,,S99rzFnrQf+8QVGgKdi3xQ,p7IR3kAsbE2EpLPADDR8Lx,,,N,0,0,,,2007-02-01 02:42,2007-02-04 01:05,hbe4678,hbe4678,,,0
1583,12457764,14517,6816030,13330,1,100,N,N,N,CP_Units,TT_Task,DT_FixedDUR2,RV_OK,TK_Complete,EM01JCV133,01J Update Model Metering Enclosure Fdns & Dwgs-IFC,,,,0,0,0,0,160,0,0,0,,2006-08-15 00:00,2007-01-12 17:00,2009-02-15 08:01,2009-02-15 08:01,,2007-01-27 00:00,2007-01-27 00:00,,,2006-08-18 08:00,2006-09-14 17:00,,,,,PT_Normal,,,,,iC2mM7ebTG2iuRVlzNBhkw,z0uyaWn2LUunSKvNidHQnB,,,N,0,0,,,2007-02-01 02:42,2007-02-04 01:05,hbe4678,hbe4678,,,0
1584,12457765,14517,6816030,13330,1,100,N,N,N,CP_Units,TT_Task,DT_FixedDUR2,RV_OK,TK_Complete,EM01YCV133,01Y Update Model Piperack Fdns & Issue Dwgs - IFC,,,,0,0,0,0,120,0,0,0,,2006-06-14 00:00,2006-07-10 17:00,2007-05-21 08:00,2007-05-21 08:00,,2007-01-27 00:00,2007-01-27 00:00,,,2006-06-20 08:00,2006-07-10 17:00,,,,,PT_Normal,,,,,URwxY1XhREKTtz5KdCMKag,Dhhbat7raUert+eOwREKkR,,,N,0,0,,,2007-02-01 02:42,2007-02-04 01:05,hbe4678,hbe4678,,,0
1585,12457766,14517,6816030,13330,1,100,N,N,N,CP_Units,TT_Task,DT_FixedDUR2,RV_OK,TK_Complete,EM01YCV122,01Y Update Model S/S Piperack & Issue Dwgs - IFC,,,,0,0,0,0,120,0,0,0,,2006-05-04 00:00,2006-07-14 17:00,2007-03-13 08:00,2007-03-13 08:00,,2007-01-27 00:00,2007-01-27 00:00,,,2006-06-08 08:00,2006-06-28 17:00,,,,,PT_Normal,,,,,lPB4sPXVSei45LSyAOJu+g,uF6RugdUj0G7ZsUr512MRB,,,N,0,0,,,2007-02-01 02:42,2007-02-04 01:05,hbe4678,hbe4678,,,0
1586,12457767,14517,6816030,13330,1,100,N,N,N,CP_Units,TT_Task,DT_FixedDUR2,RV_OK,TK_Complete,EM01YCV130,01Y Design & Model Structural Piperack Fdns,,,,0,0,0,0,232,0,0,0,,2006-01-03 08:00,2006-03-17 17:00,2007-03-13 08:00,2007-03-13 08:00,,2007-01-27 00:00,2007-01-27 00:00,,,2006-01-03 08:00,2006-02-10 17:00,,,,,PT_Normal,,,,,BttAXcbkSlmCESRCsuZrkg,zFwsJvkAa0q96l0hdFZ1mB,,,N,0,0,,,2007-02-01 02:42,2007-02-04 01:05,hbe4678,hbe4678,,,0
1587,12457768,14517,6816030,13330,1,100,N,N,N,CP_Units,TT_Task,DT_FixedDUR2,RV_OK,TK_Complete,EM01BCV120,01B Design & Model Structural Steel Sleepers,,,,0,0,0,0,200,0,0,0,,2005-11-08 08:00,2006-03-17 17:00,2007-07-18 08:00,2007-07-18 08:00,,2007-01-27 00:00,2007-01-27 00:00,,,2005-11-08 08:00,2005-12-12 17:00,,,,,PT_Normal,,,,,4DNTb+aFQEORoxtyys3c8w,OeE0pGsfjkS7RT7pWz2A/R,,,N,0,0,,,2007-02-01 02:42,2007-02-04 01:05,hbe4678,hbe4678,,,0
1588,12457769,14517,6816030,13330,1,100,N,N,N,CP_Units,TT_Task,DT_FixedDUR2,RV_OK,TK_Complete,EM01BCV123,01B Update Model S/S Sleepers & Issue Dwgs - IFC,,,,0,0,0,0,240,0,0,0,,2006-07-12 08:00,2006-08-30 00:00,2007-07-18 08:00,2007-07-18 08:00,,2007-01-27 00:00,2007-01-27 00:00,,,2006-07-12 08:00,2006-08-22 17:00,,,,,PT_Normal,,,,,P4LaJC5DTfGXDm73zmko/w,OzAZfqCUnUS64Yfz6DJrgh,,,N,0,0,,,2007-02-01 02:42,2007-02-04 01:05,hbe4678,hbe4678,,,0
1589,12457770,14517,6816030,13330,1,100,N,N,N,CP_Units,TT_Task,DT_FixedDUR2,RV_OK,TK_Complete,EM01JCV120,01J Design & Model Metering Enclosure,,,,0,0,0,0,216,0,0,0,,2006-05-01 00:00,2006-05-10 00:00,2009-02-15 08:01,2009-02-15 08:01,,2007-01-27 00:00,2007-01-27 00:00,,,2006-05-15 08:00,2006-06-20 17:00,,,,,PT_Normal,,,,,OhEwFz59TY2HveQ9oodZfw,g7jlU4Rog0205bCHiZfXNB,,,N,0,0,,,2007-02-01 02:42,2007-02-04 01:05,hbe4678,hbe4678,,,0
1590,12457771,14517,6816030,13330,1,100,N,N,N,CP_Units,TT_Task,DT_FixedDUR2,RV_OK,TK_Complete,EM01JCV122,01J Update Model Metering Enclosure & Issue Dwgs (Concrete Wall) - IFC,,,,0,0,0,0,160,0,0,0,,2006-08-01 08:00,2007-01-12 17:00,2009-02-15 08:01,2009-02-15 08:01,,2007-01-27 00:00,2007-01-27 00:00,,,2006-08-01 08:00,2006-08-28 17:00,,,,,PT_Normal,,,,,ect31Au2QTOhwwV/pG3OOQ,cDU067jgDEi0t25yb1F5Sx,,,N,0,0,,,2007-02-01 02:42,2007-02-04 01:05,hbe4678,hbe4678,,,0
1591,12457772,14517,6816030,13330,1,100,N,N,N,CP_Units,TT_Task,DT_FixedDUR2,RV_OK,TK_Complete,EM01DCV110,01D Design & Model Cooling Tower Basin,,,,0,0,0,0,240,0,0,0,,2005-10-03 08:00,2005-12-21 00:00,2007-04-08 08:01,2007-04-08 08:01,,2007-01-27 00:00,2007-01-27 00:00,,,2005-10-03 08:00,2005-11-11 17:00,,,,,PT_Normal,,,,,g1LgcI0FRcqwZMt4Z7fPSw,OpidG9ZvtkG64ajOVYdlvx,,,N,0,0,,,2007-02-01 02:42,2007-02-04 01:05,hbe4678,hbe4678,,,0
1592,12457773,14517,6816030,13330,1,100,N,N,N,CP_Units,TT_Task,DT_FixedDUR2,RV_OK,TK_Complete,EM01DCV113,01D Update Model CT Basin & Issue Dwgs-IFC,,,,0,0,0,0,240,0,0,0,,2006-03-03 00:00,2006-04-21 00:00,2007-04-08 08:01,2007-04-08 08:01,,2007-01-27 00:00,2007-01-27 00:00,,,2006-04-05 08:00,2006-05-16 17:00,,,,,PT_Normal,,,,,srrDUtBxTOmjl3r6Q1fSjg,pfJYMwNzjUabQgYYBE+7RB,,,N,0,0,,,2007-02-01 02:42,2007-02-04 01:05,hbe4678,hbe4678,,,0
1593,12457774,14517,6816030,13330,1,100,N,N,N,CP_Units,TT_Task,DT_FixedDUR2,RV_OK,TK_Complete,EM01YCV120,01Y Design & Model Structural Steel Piperack,,,,0,0,0,0,232,0,0,0,,2006-01-05 08:00,2006-03-17 17:00,2007-03-13 08:00,2007-03-13 08:00,,2007-01-27 00:00,2007-01-27 00:00,,,2006-01-05 08:00,2006-02-14 17:00,,,,,PT_Normal,,,,,MqF0FBYhQ+GUxhu1TaKWGA,X4oOx+gYjk6oWpnzWCQwbx,,,N,0,0,,,2007-02-01 02:42,2007-02-04 01:05,hbe4678,hbe4678,,,0
1594,12457775,14517,6816030,13330,1,100,N,N,N,CP_Units,TT_Task,DT_FixedDUR2,RV_OK,TK_Complete,EM01BCV226,01B Issue Fdn IFC- 2001-FA/FB (Water Storage Tanks),,,,0,0,0,0,120,0,0,0,,2006-03-27 00:00,2006-05-30 00:00,2007-02-06 08:01,2007-02-06 08:01,,2007-01-27 00:00,2007-01-27 00:00,,,2006-04-10 08:00,2006-04-28 17:00,,,,,PT_Normal,,,,,W4JZgavKQe+x8CPdHLh+hA,5xl5Hf/UZkOqaxA1PMW56R,,,N,0,0,,,2007-02-01 02:42,2007-02-04 01:05,hbe4678,hbe4678,,,0
1595,12457776,14517,6816030,13330,1,100,N,N,N,CP_Units,TT_Task,DT_FixedDUR2,RV_OK,TK_Complete,EM01CCV180,01C Design & Model Major Eq. Fdns (Including EDR),,,,0,0,0,0,160,0,0,0,,2006-09-18 08:00,2007-01-05 00:00,2007-06-12 08:01,2007-06-12 08:01,,2007-01-27 00:00,2007-01-27 00:00,,,2006-09-18 08:00,2006-10-13 17:00,,,,,PT_Normal,,,,,AWiBqQL1SL2QTKPOna3jwg,MADrQGjSWkarTVl1yRMAoB,,,N,0,0,,,2007-02-01 02:42,2007-02-04 01:05,hbe4678,hbe4678,,,0
1596,12457777,14517,6816030,13330,1,100,N,N,N,CP_Units,TT_Task,DT_FixedDUR2,RV_OK,TK_Complete,EM01CCV190,01C Update Model Major Eq. Fdns & Issue Dwgs-IFC (Including EDR),,,,0,0,0,0,80,0,0,0,,2006-12-04 08:00,2007-01-26 17:00,2007-06-12 08:01,2007-06-12 08:01,,2007-01-27 00:00,2007-01-27 00:00,,,2006-12-04 08:00,2006-12-15 17:00,,,,,PT_Normal,,,,,ydTsoFtuSZa7mBa2DkOlQA,bURRWPKJxkqUJHXu2Gs98R,,,N,0,0,,,2007-02-01 02:42,2007-02-04 01:05,hbe4678,hbe4678,,,0
1597,12457778,14517,6816030,13330,1,100,N,N,N,CP_Units,TT_Task,DT_FixedDUR2,RV_OK,TK_Complete,EM01BCV160,01B Design & Model Major Eq. Fdns,,,,0,0,0,0,160,0,0,0,,2005-11-08 08:00,2006-03-17 17:00,2007-05-07 08:00,2007-05-07 08:00,,2007-01-27 00:00,2007-01-27 00:00,,,2005-11-08 08:00,2005-12-05 17:00,,,,,PT_Normal,,,,,ca1R5BeHSg+RZunmc6KXOQ,27M8tkOj0km7d3fOPLwUeR,,,N,0,0,,,2007-02-01 02:42,2007-02-04 01:05,hbe4678,hbe4678,,,0
1598,12457779,14517,6816030,13330,1,100,N,N,N,CP_Units,TT_Task,DT_FixedDUR2,RV_OK,TK_Complete,EM01BCV164,01B Update Model Major Eq. Fdns & Issue Dwgs-IFC,,,,0,0,0,0,80,0,0,0,,2006-07-03 08:00,2006-07-31 17:00,2007-07-08 08:00,2007-07-08 08:00,,2007-01-27 00:00,2007-01-27 00:00,,,2006-07-03 08:00,2006-07-14 17:00,,,,,PT_Normal,,,,,1yUUZCqqT2+cZ2FE0VTiug,XgV7m/xkx0aGNWHd0BU6mh,,,N,0,0,,,2007-02-01 02:42,2007-02-04 01:05,hbe4678,hbe4678,,,0
1599,12457780,14517,6816030,13330,1,100,N,N,N,CP_Units,TT_Task,DT_FixedDUR2,RV_OK,TK_Complete,EM01BCV166,01B Conceptual Misc. Foundation Design/ Model,,,,0,0,0,0,120,0,0,0,,2006-07-24 08:00,2006-08-28 00:00,2007-10-21 08:00,2007-10-21 08:00,,2007-01-27 00:00,2007-01-27 00:00,,,2006-07-24 08:00,2006-08-11 17:00,,,,,PT_Normal,,,,,/LGyXkVPSD2x7/rLKke9/w,N8G9Qjb4D0aRgHMXTz+bGR,,,N,0,0,,,2007-02-01 02:42,2007-02-04 01:05,hbe4678,hbe4678,,,0
1600,12457781,14517,6816030,13330,1,100,N,N,N,CP_Units,TT_Task,DT_FixedDUR2,RV_OK,TK_Complete,EM01BCV167,01B Update Model Misc Fdns & Issue Dwgs - IFC,,,,0,0,0,0,40,0,0,0,,2006-10-09 08:00,2006-11-02 00:00,2007-10-21 08:00,2007-10-21 08:00,,2007-01-27 00:00,2007-01-27 00:00,,,2006-10-09 08:00,2006-10-13 17:00,,,,,PT_Normal,,,,,WdifS1moSFC85rxU1Iazmg,iENCGzwJcEyXAmTi8l0n6B,,,N,0,0,,,2007-02-01 02:42,2007-02-04 01:05,hbe4678,hbe4678,,,0
1601,12457782,14517,6816030,13330,1,100,N,N,N,CP_Units,TT_Task,DT_FixedDUR2,RV_OK,TK_Complete,EM01CCV160,01C Design & Model Major Eq. Fdns (Excluding EDR),,,,0,0,0,0,160,0,0,0,,2006-03-13 08:00,2006-10-31 17:00,2007-06-12 08:01,2007-06-12 08:01,,2007-01-27 00:00,2007-01-27 00:00,,,2006-03-13 08:00,2006-04-07 17:00,,,,,PT_Normal,,,,,M6ysP1zvRBqeBq/S/Je67g,5xl5Hf/UZkOqaxA1PMW56R,,,N,0,0,,,2007-02-01 02:42,2007-02-04 01:05,hbe4678,hbe4678,,,0
1602,12457783,14517,6816030,13330,1,100,N,N,N,CP_Units,TT_Task,DT_FixedDUR2,RV_OK,TK_Complete,EM01CCV164,01C Update Model Major Eq. Fdns & Issue Dwgs-IFC (Excluding EDR),,,,0,0,0,0,80,0,0,0,,2006-11-16 08:00,2007-01-26 17:00,2007-06-12 08:01,2007-06-12 08:01,,2007-01-27 00:00,2007-01-27 00:00,,,2006-11-16 08:00,2006-11-29 17:00,,,,,PT_Normal,,,,,WbIobPzuS6q7u42GZJZgSA,qTC7cl0nM06p7tro6HtRMx,,,N,0,0,,,2007-02-01 02:42,2007-02-04 01:05,hbe4678,hbe4678,,,0
1603,12457784,14517,6816030,13330,1,100,N,N,N,CP_Units,TT_Task,DT_FixedDUR2,RV_OK,TK_Complete,EM01DCV120,01D Design & Model Structural Steel Sleepers,,,,0,0,0,0,400,0,0,0,,2005-10-03 08:00,2006-03-03 17:00,2007-04-08 08:01,2007-04-08 08:01,,2007-01-27 00:00,2007-01-27 00:00,,,2005-10-03 08:00,2005-12-09 17:00,,,,,PT_Normal,,,,,xj0gpRH/T9WQfq2amsYScA,iTXtEIcfAkmh4gEJwMIsdx,,,N,0,0,,,2007-02-01 02:42,2007-02-04 01:05,hbe4678,hbe4678,,,0
1604,12457785,14517,6816030,13330,1,100,N,N,N,CP_Units,TT_Task,DT_FixedDUR2,RV_OK,TK_Complete,EM01DCV122,01D Update Model S/S Sleepers & Issue Dwgs - IFC,,,,0,0,0,0,120,0,0,0,,2006-09-04 00:00,2006-09-27 00:00,2007-05-16 08:01,2007-05-16 08:01,,2007-01-27 00:00,2007-01-27 00:00,,,2006-09-14 08:00,2006-10-04 17:00,,,,,PT_Normal,,,,,qX3gRknYQ2qPz+0UJt5zjw,TMVIiQeE+kC86Q3zFmTAgh,,,N,0,0,,,2007-02-01 02:42,2007-02-04 01:05,hbe4678,hbe4678,,,0
1605,12457786,14517,6816030,13330,1,100,N,N,N,CP_Units,TT_Task,DT_FixedDUR2,RV_OK,TK_Complete,EM01DCV130,01D Design & Model S/S Sleeper Fdns,,,,0,0,0,0,280,0,0,0,,2005-10-25 08:00,2006-03-03 17:00,2007-04-08 08:01,2007-04-08 08:01,,2007-01-27 00:00,2007-01-27 00:00,,,2005-10-25 08:00,2005-12-12 17:00,,,,,PT_Normal,,,,,PrFU+HDgSmm+/PVcQhhfXQ,h5HNyTvbeUqTW8CtSWXnsh,,,N,0,0,,,2007-02-01 02:42,2007-02-04 01:05,hbe4678,hbe4678,,,0
1606,12457787,14517,6816030,13330,1,100,N,N,N,CP_Units,TT_Task,DT_FixedDUR2,RV_OK,TK_Complete,EM01DCV126,01D Conceptual Misc. Steel Design/ Model,,,,0,0,0,0,160,0,0,0,,2006-07-27 08:00,2006-09-29 00:00,2007-05-16 08:01,2007-05-16 08:01,,2007-01-27 00:00,2007-01-27 00:00,,,2006-07-27 08:00,2006-08-23 17:00,,,,,PT_Normal,,,,,gT7JpfHcRLCeyuBH2WrFcQ,tV7xQ2rTnEusJMt1W/F5Ax,,,N,0,0,,,2007-02-01 02:42,2007-02-04 01:05,hbe4678,hbe4678,,,0
1607,12457788,14517,6816030,13330,1,100,N,N,N,CP_Units,TT_Task,DT_FixedDUR2,RV_OK,TK_Complete,EM01DCV127,01D Model Misc. Steel & Issue Dwgs - IFC,,,,0,0,0,0,40,0,0,0,,2006-10-30 08:00,2006-11-02 00:00,2007-05-16 08:01,2007-05-16 08:01,,2007-01-27 00:00,2007-01-27 00:00,,,2006-10-30 08:00,2006-11-03 17:00,,,,,PT_Normal,,,,,dYoVvg2mSaWajsdiCcxvYw,5hEIiOeWV0ujauQWgFvgix,,,N,0,0,,,2007-02-01 02:42,2007-02-04 01:05,hbe4678,hbe4678,,,0
1608,12457789,14517,6816030,13330,1,100,N,N,N,CP_Units,TT_Task,DT_FixedDUR2,RV_OK,TK_Complete,EM01DCV133,01D Update Model S/S Sleeper Fdns & Issue Dwgs - IFC,,,,0,0,0,0,160,0,0,0,,2006-09-04 00:00,2006-09-23 00:00,2007-08-21 08:01,2007-08-21 08:01,,2007-01-27 00:00,2007-01-27 00:00,,,2006-09-14 08:00,2006-10-11 17:00,,,,,PT_Normal,,,,,UdYXKhxZRyCsJiuSqiD1TQ,KWZZGE3yZ0KrzQi1YJ1s7R,,,N,0,0,,,2007-02-01 02:42,2007-02-04 01:05,hbe4678,hbe4678,,,0
1609,12457790,14517,6816030,13330,1,100,N,N,N,CP_Units,TT_Task,DT_FixedDUR2,RV_OK,TK_Complete,EM01DCV160,01D Design & Model Major Eq. Fdns,,,,0,0,0,0,360,0,0,0,,2005-10-03 08:00,2006-03-03 17:00,2007-04-08 08:01,2007-04-08 08:01,,2007-01-27 00:00,2007-01-27 00:00,,,2005-10-03 08:00,2005-12-02 17:00,,,,,PT_Normal,,,,,D/yTaNotQ3Gyv4clzSw5Ow,MADrQGjSWkarTVl1yRMAoB,,,N,0,0,,,2007-02-01 02:42,2007-02-04 01:05,hbe4678,hbe4678,,,0
1610,12457791,14517,6816030,13330,1,100,N,N,N,CP_Units,TT_Task,DT_FixedDUR2,RV_OK,TK_Complete,EM01DCV164,01D Update Model Major Eq. Fdns & Issue Dwgs-IFC,,,,0,0,0,0,200,0,0,0,,2006-04-25 00:00,2006-05-12 00:00,2007-04-08 08:01,2007-04-08 08:01,,2007-01-27 00:00,2007-01-27 00:00,,,2006-06-02 08:00,2006-07-06 17:00,,,,,PT_Normal,,,,,dr+pDKHkTlOVDqCfE/D/og,bURRWPKJxkqUJHXu2Gs98R,,,N,0,0,,,2007-02-01 02:42,2007-02-04 01:05,hbe4678,hbe4678,,,0
1611,12457792,14517,6816030,13330,1,100,N,N,N,CP_Units,TT_Task,DT_FixedDUR2,RV_OK,TK_Complete,EM01DCV166,01D Conceptual Misc. Foundation Design/ Model,,,,0,0,0,0,120,0,0,0,,2006-08-01 08:00,2006-10-31 00:00,2007-08-06 08:01,2007-08-06 08:01,,2007-01-27 00:00,2007-01-27 00:00,,,2006-08-01 08:00,2006-08-21 17:00,,,,,PT_Normal,,,,,5GnOnoFUS/akYKEsOVV40A,0reqIxFxzEaCOZ5/YQruQx,,,N,0,0,,,2007-02-01 02:42,2007-02-04 01:05,hbe4678,hbe4678,,,0
1612,12457793,14517,6816030,13330,1,100,N,N,N,CP_Units,TT_Task,DT_FixedDUR2,RV_OK,TK_Complete,EM01DCV167,01D Update Model Misc Fdns & Issue Dwgs - IFC,,,,0,0,0,0,40,0,0,0,,2006-10-30 08:00,2006-11-02 00:00,2007-08-06 08:01,2007-08-06 08:01,,2007-01-27 00:00,2007-01-27 00:00,,,2006-10-30 08:00,2006-11-03 17:00,,,,,PT_Normal,,,,,qX15MvokRi+sJW0EkVejLQ,dtGhASfpQ0iJFjGOHcDxFx,,,N,0,0,,,2007-02-01 02:42,2007-02-04 01:05,hbe4678,hbe4678,,,0
1613,12457794,14517,6816030,13330,1,100,N,N,N,CP_Units,TT_Task,DT_FixedDUR2,RV_OK,TK_Complete,EM01GCV160,01G Design & Model Control Building Fdns,,,,0,0,0,0,240,0,0,0,,2005-10-21 08:00,2006-01-09 17:00,2007-01-10 08:00,2007-01-10 08:00,,2007-01-27 00:00,2007-01-27 00:00,,,2005-10-21 08:00,2005-12-01 17:00,,,,,PT_Normal,,,,,x+wGtOa3RoSkXSXz+VjDkQ,ulXUkkeKvEmKSVXv5FshJB,,,N,0,0,,,2007-02-01 02:42,2007-02-04 01:05,hbe4678,hbe4678,,,0
1614,12457795,14517,6816030,13330,1,100,N,N,N,CP_Units,TT_Task,DT_FixedDUR2,RV_OK,TK_Complete,EM01GCV164,01G Update Model Control Bldg Fdns & Issue Dwgs-IFC,,,,0,0,0,0,168,0,0,0,,2006-03-06 00:00,2006-03-27 17:00,2007-01-10 08:00,2007-01-10 08:00,,2007-01-27 00:00,2007-01-27 00:00,,,2006-03-13 08:00,2006-04-10 17:00,,,,,PT_Normal,,,,,eaKbCO06Rmm0sMUmURePMQ,gTW1+tGFjUu0dsWCtEvuCx,,,N,0,0,,,2007-02-01 02:42,2007-02-04 01:05,hbe4678,hbe4678,,,0
1615,12457796,14517,6816030,13330,1,100,N,N,N,CP_Units,TT_Task,DT_FixedDUR2,RV_OK,TK_Complete,EM01HCV125,01H Design & Model Substation Fdns,,,,0,0,0,0,208,0,0,0,2006-11-06 00:00,2006-11-13 08:00,2006-11-17 00:00,2007-07-16 08:01,2007-07-16 08:01,,2007-01-27 00:00,2007-01-27 00:00,,,2006-11-13 08:00,2006-12-18 17:00,,,,CS_MSOA,PT_Normal,,,,,bJ6IaNNxQA2w/bCUgcwBZw,6s4Oto307ESBcKg+u4nt9x,,,N,0,0,,,2007-02-01 02:42,2007-02-04 01:05,hbe4678,hbe4678,,,0
1616,12457797,14517,6816030,13330,1,100,N,N,N,CP_Units,TT_Task,DT_FixedDUR2,RV_OK,TK_Complete,EM01HCV126,01H Conceptual Misc. Steel Design/ Model,,,,0,0,0,0,160,0,0,0,,2006-11-13 08:00,2006-12-11 08:00,2007-03-27 08:01,2007-03-27 08:01,,2007-01-27 00:00,2007-01-27 00:00,,,2006-11-13 08:00,2006-12-08 17:00,,,,,PT_Normal,,,,,hy7Qyq9JTbySvJJ7gqKI7A,iJNnbcSgr0eccHojzBxBfB,,,N,0,0,,,2007-02-01 02:42,2007-02-04 01:05,hbe4678,hbe4678,,,0
1617,12457798,14517,6816030,13330,1,100,N,N,N,CP_Units,TT_Task,DT_FixedDUR2,RV_OK,TK_Complete,EM01HCV127,01H Model Misc. Steel & Issue Dwgs - IFC,,,,0,0,0,0,40,0,0,0,,2006-12-11 08:00,2007-01-26 17:00,2007-03-27 08:01,2007-03-27 08:01,,2007-01-27 00:00,2007-01-27 00:00,,,2006-12-11 08:00,2006-12-15 17:00,,,,,PT_Normal,,,,,sE5GG2t0SBa4Udvpox89JA,tcsTR7uRaEqxJqZEfCfoxx,,,N,0,0,,,2007-02-01 02:42,2007-02-04 01:05,hbe4678,hbe4678,,,0
1618,12457799,14517,6816030,13330,1,100,N,N,N,CP_Units,TT_Task,DT_FixedDUR2,RV_OK,TK_Complete,EM01BCV130,01B Design & Model S/S Sleeper Fdns,,,,0,0,0,0,160,0,0,0,,2005-11-08 08:00,2006-03-17 00:00,2007-05-07 08:00,2007-05-07 08:00,,2007-01-27 00:00,2007-01-27 00:00,,,2005-11-08 08:00,2005-12-05 17:00,,,,,PT_Normal,,,,,05ICBGo4RkytsZB3oVWBBQ,DhYwFMwfgEWY5rs7jf2+ch,,,N,0,0,,,2007-02-01 02:42,2007-02-04 01:05,hbe4678,hbe4678,,,0
1619,12457800,14517,6816030,13330,1,100,N,N,N,CP_Units,TT_Task,DT_FixedDUR2,RV_OK,TK_Complete,EM01BCV126,01B Conceptual Misc. Steel Design/ Model,,,,0,0,0,0,160,0,0,0,,2006-07-12 08:00,2006-08-28 00:00,2007-05-07 08:00,2007-05-07 08:00,,2007-01-27 00:00,2007-01-27 00:00,,,2006-07-12 08:00,2006-08-08 17:00,,,,,PT_Normal,,,,,T/IHVqCoQEeCalSekOdO+Q,vDyjQgqh00aqf41o8+c1OB,,,N,0,0,,,2007-02-01 02:42,2007-02-04 01:05,hbe4678,hbe4678,,,0
1620,12457801,14517,6816030,13330,1,100,N,N,N,CP_Units,TT_Task,DT_FixedDUR2,RV_OK,TK_Complete,EM01BCV127,01B Model Misc. Steel & Issue Dwgs - IFC,,,,0,0,0,0,40,0,0,0,,2006-10-09 08:00,2006-11-02 00:00,2007-05-07 08:00,2007-05-07 08:00,,2007-01-27 00:00,2007-01-27 00:00,,,2006-10-09 08:00,2006-10-13 17:00,,,,,PT_Normal,,,,,czu0Y2bxS+y7RuVfK0+lJQ,85ks0sRLvkGFJNYzYoEunR,,,N,0,0,,,2007-02-01 02:42,2007-02-04 01:05,hbe4678,hbe4678,,,0
1621,12457802,14517,6816030,13330,1,100,N,N,N,CP_Units,TT_Task,DT_FixedDUR2,RV_OK,TK_Complete,EM01BCV133,01B Update Model S/S Sleeper Fdns & Issue Dwgs - IFC,,,,0,0,0,0,200,0,0,0,,2006-07-31 08:00,2006-08-30 00:00,2007-07-18 08:00,2007-07-18 08:00,,2007-01-27 00:00,2007-01-27 00:00,,,2006-07-31 08:00,2006-09-01 17:00,,,,,PT_Normal,,,,,h/ZVYqDcRjGzNEbY5duyrA,PYaDnxdReU6NWgW3C3hUzR,,,N,0,0,,,2007-02-01 02:42,2007-02-04 01:05,hbe4678,hbe4678,,,0
1622,12457803,14517,6816031,13330,1,100,N,N,N,CP_Units,TT_Task,DT_FixedDUR2,RV_OK,TK_Complete,EM01AEL120,01A Electrical Conceptual Layouts,,,,0,0,0,0,320,0,0,0,,2005-10-31 08:00,2005-11-08 00:00,2007-05-07 08:00,2007-05-07 08:00,,2007-01-27 00:00,2007-01-27 00:00,,,2005-10-31 08:00,2005-12-23 17:00,,,,,PT_Normal,,,,,dujp2x8VQGW757VB9R/FsQ,iDqVV96XU0C/E7CNfJvUrx,,,N,0,0,,,2007-02-01 02:42,2007-02-04 01:05,hbe4678,hbe4678,,,0
1623,12457804,14517,6816031,13330,1,100,N,N,N,CP_Units,TT_Task,DT_FixedDUR2,RV_OK,TK_Complete,EM01BEL120,01B Electrical Conceptual Layouts,,,,0,0,0,0,128,0,0,0,,2005-10-21 08:00,2005-11-03 00:00,2007-05-07 08:00,2007-05-07 08:00,,2007-01-27 00:00,2007-01-27 00:00,,,2005-10-21 08:00,2005-11-11 17:00,,,,,PT_Normal,,,,,Bepqnul8QhaM1CzfZrj23w,yh8EIflpPEq5E076V/hkER,,,N,0,0,,,2007-02-01 02:42,2007-02-04 01:05,hbe4678,hbe4678,,,0
1624,12457805,14517,6816031,13330,1,100,N,N,N,CP_Units,TT_Task,DT_FixedDUR2,RV_OK,TK_Complete,EM01CEL120,01C Electrical Conceptual Layouts,,,,0,0,0,0,120,0,0,0,,2005-10-03 00:00,2006-03-20 00:00,2007-05-07 08:00,2007-05-07 08:00,,2007-01-27 00:00,2007-01-27 00:00,,,2006-03-20 08:00,2006-04-07 17:00,,,,,PT_Normal,,,,,1McSq0MjTx+AzydfY+HSNQ,mMhY2K4xWEyjAoXZiDYQAh,,,N,0,0,,,2007-02-01 02:42,2007-02-04 01:05,hbe4678,hbe4678,,,0
1625,12457806,14517,6816031,13330,1,100,N,N,N,CP_Units,TT_Task,DT_FixedDUR2,RV_OK,TK_Complete,EM01DEL120,01D Electrical Conceptual Layouts,,,,0,0,0,0,160,0,0,0,,2005-10-21 08:00,2005-11-03 00:00,2007-04-08 08:01,2007-04-08 08:01,,2007-01-27 00:00,2007-01-27 00:00,,,2005-10-21 08:00,2005-11-17 17:00,,,,,PT_Normal,,,,,xPAftS8+Q7CBKq3eOENHRw,LxnsirSBjEWSI4Ba6W+KQB,,,N,0,0,,,2007-02-01 02:42,2007-02-04 01:05,hbe4678,hbe4678,,,0
1626,12457807,14517,6816031,13330,1,100,N,N,N,CP_Units,TT_Task,DT_FixedDUR2,RV_OK,TK_Complete,EM01EEL120,01E Electrical Conceptual Layouts,,,,0,0,0,0,200,0,0,0,,2005-10-28 00:00,2005-12-13 00:00,2007-07-09 08:00,2007-07-09 08:00,,2007-01-27 00:00,2007-01-27 00:00,,,2005-11-14 08:00,2005-12-16 17:00,,,,,PT_Normal,,,,,dkeVGA3bR8C7CWCgXPK02A,EhZhu1YuRUq191/B1ia56R,,,N,0,0,,,2007-02-01 02:42,2007-02-04 01:05,hbe4678,hbe4678,,,0
1627,12457808,14517,6816031,13330,1,100,N,N,N,CP_Units,TT_Task,DT_FixedDUR2,RV_OK,TK_Complete,EM01HEL120,01H Electrical Conceptual Layouts,,,,0,0,0,0,200,0,0,0,,2005-11-01 00:00,2005-12-09 17:00,2007-03-27 08:01,2007-03-27 08:01,,2007-01-27 00:00,2007-01-27 00:00,,,2005-11-14 08:00,2005-12-16 17:00,,,,,PT_Normal,,,,,64ku25QWQGC3rOJbHc0EDA,hzgOsE4OkUKSgjWDb1eZox,,,N,0,0,,,2007-02-01 02:42,2007-02-04 01:05,hbe4678,hbe4678,,,0
1628,12457809,14517,6816031,13330,1,100,N,N,N,CP_Units,TT_Task,DT_FixedDUR2,RV_OK,TK_Complete,EM01JEL120,01J Electrical Conceptual Layouts,,,,0,0,0,0,120,0,0,0,,2005-11-21 08:00,2005-12-13 00:00,2007-07-02 08:00,2007-07-02 08:00,,2007-01-27 00:00,2007-01-27 00:00,,,2005-11-21 08:00,2005-12-09 17:00,,,,,PT_Normal,,,,,dKXK74m4Ss6ypHu90dhvkw,awoU3dsWR0q1BHxRn+0XNh,,,N,0,0,,,2007-02-01 02:42,2007-02-04 01:05,hbe4678,hbe4678,,,0
1629,12457810,14517,6816031,13330,1,100,N,N,N,CP_Units,TT_Task,DT_FixedDUR2,RV_OK,TK_Complete,EM01YEL120,01Y Electrical Conceptual Layouts,,,,0,0,0,0,320,0,0,0,,2005-09-27 08:00,2005-11-03 00:00,2007-03-13 08:00,2007-03-13 08:00,,2007-01-27 00:00,2007-01-27 00:00,,,2005-09-27 08:00,2005-11-21 17:00,,,,,PT_Normal,,,,,ek4FZ1SWQx2vRPXLCZM5aA,004nErDi6kijNSj79BnlaB,,,N,0,0,,,2007-02-01 02:42,2007-02-04 01:05,hbe4678,hbe4678,,,0
1630,12457811,14517,6816038,13330,1,100,N,N,N,CP_Units,TT_Task,DT_FixedDUR2,RV_OK,TK_Complete,EM01BMD228,"01B  Clips Release IFC (Tanks, 2001FA/FB)",,,,0,0,0,0,240,0,0,0,,2006-04-17 08:00,2006-05-02 00:00,2007-05-07 08:00,2007-05-07 08:00,,2007-01-27 00:00,2007-01-27 00:00,,,2006-04-17 08:00,2006-05-26 17:00,,,,,PT_Normal,,,,,ej29+QVAQouRo5pdr9rKlg,w8WuSoRh20KjUJIVaekbNB,,,N,0,0,,,2007-02-01 02:42,2007-02-04 01:05,hbe4678,hbe4678,,,0
1631,12457812,14517,6816038,13330,1,100,N,N,N,CP_Units,TT_Task,DT_FixedDUR2,RV_OK,TK_Complete,EM01BMD229,01B  Vessel Steel  Release IFC,,,,0,0,0,0,160,0,0,0,,2006-05-01 08:00,2006-07-03 00:00,2007-05-07 08:00,2007-05-07 08:00,,2007-01-27 00:00,2007-01-27 00:00,,,2006-05-01 08:00,2006-05-26 17:00,,,,,PT_Normal,,,,,TW1Rm00BT6yM1J0UK8jJ5w,TFHIvEG3/ke4iiWG87TPPh,,,N,0,0,,,2007-02-01 02:42,2007-02-04 01:05,hbe4678,hbe4678,,,0
1632,12457813,14517,6816040,13331,1,100,N,N,N,CP_Units,TT_Task,DT_FixedDUR2,RV_OK,TK_Complete,EM01DPI143,01D OP's & Serv. Model Review Comments Resolution,,,,0,0,0,0,40,0,0,0,,2006-09-01 00:00,2006-09-13 17:00,2007-05-16 08:01,2007-05-16 08:01,,2007-01-27 00:00,2007-01-27 00:00,,,2006-08-28 08:00,2006-09-01 17:00,,,,,PT_Normal,,,,,FM+EwoYgSimPpNiUY150YA,vUz2HJYZ2kKyEzgH/KZ5jQ,,,N,0,0,,,2007-02-01 02:42,2007-02-04 01:05,hbe4678,hbe4678,,,0
1633,12457814,14517,6816040,13331,1,100,N,N,N,CP_Units,TT_Task,DT_FixedDUR2,RV_OK,TK_Complete,EM01YPI140,01Y Model Review Comment Resolution,,,,0,0,0,0,40,0,0,0,,2006-02-21 00:00,2006-02-27 00:00,2007-03-13 08:00,2007-03-13 08:00,,2007-01-27 00:00,2007-01-27 00:00,,,2006-03-06 08:00,2006-03-10 17:00,,,,,PT_Normal,,,,,fCDiKUnlQNuQNguhSdUXMA,/H+vHh9iJEG2Ygv1lwJIkB,,,N,0,0,,,2007-02-01 02:42,2007-02-04 01:05,hbe4678,hbe4678,,,0
1634,12457815,14517,6816040,13331,1,100,N,N,N,CP_Units,TT_Task,DT_FixedDUR2,RV_OK,TK_Complete,EM01YPI141,01Y Detail OP's & Services Model Review Mtg,,,,0,0,0,0,16,0,0,0,,2006-05-30 08:00,2006-05-30 08:00,2007-03-13 08:00,2007-03-13 08:00,,2007-01-27 00:00,2007-01-27 00:00,,,2006-05-30 08:00,2006-05-31 17:00,,,,,PT_Normal,,,,,FS1iGP2ERlSZFIxbbvEvgQ,/H+vHh9iJEG2Ygv1lwJIkB,,,N,0,0,,,2007-02-01 02:42,2007-02-04 01:05,hbe4678,hbe4678,,,0
1635,12457816,14517,6816040,13331,1,100,N,N,N,CP_Units,TT_Task,DT_FixedDUR2,RV_OK,TK_Complete,EM01YPI142,01Y OP's & Serv. Model Review Comment Resolution,,,,0,0,0,0,16,0,0,0,,2006-06-05 08:00,2006-06-06 00:00,2007-03-13 08:00,2007-03-13 08:00,,2007-01-27 00:00,2007-01-27 00:00,,,2006-06-05 08:00,2006-06-06 17:00,,,,,PT_Normal,,,,,ZJeqK5leTTOmHkoR0u51wQ,/H+vHh9iJEG2Ygv1lwJIkB,,,N,0,0,,,2007-02-01 02:42,2007-02-04 01:05,hbe4678,hbe4678,,,0
1636,12457817,14517,6816040,13331,1,100,N,N,N,CP_Units,TT_Task,DT_FixedDUR2,RV_OK,TK_Complete,EM01CPI141,01C Detail OP's & Services Model Review Mtg,,,,0,0,0,0,16,0,0,0,2006-11-27 00:00,2006-12-05 08:00,2006-12-06 17:00,2007-05-31 08:01,2007-05-31 08:01,,2007-01-27 00:00,2007-01-27 00:00,,,2006-12-05 08:00,2006-12-06 17:00,,,,CS_MSOA,PT_Normal,,,,,m3DWK6BpQtGsZncobf6keA,UEuejLZkNEKG3wvw9P3osh,,,N,0,0,,,2007-02-01 02:42,2007-02-04 01:05,hbe4678,hbe4678,,,0
1637,12457818,14517,6816040,13331,1,100,N,N,N,CP_Units,TT_Task,DT_FixedDUR2,RV_OK,TK_Complete,EM01CPI142,01C OP's & Serv. Model Review Comment Resolution,,,,0,0,0,0,16,0,0,0,2006-11-27 00:00,2006-12-07 08:00,2006-12-07 17:00,2007-05-31 08:01,2007-05-31 08:01,,2007-01-27 00:00,2007-01-27 00:00,,,2006-12-07 08:00,2006-12-08 17:00,,,,CS_MSOA,PT_Normal,,,,,J6VUaZ7QSOqRgY8djErItQ,UEuejLZkNEKG3wvw9P3osh,,,N,0,0,,,2007-02-01 02:42,2007-02-04 01:05,hbe4678,hbe4678,,,0
1638,12457819,14517,6816040,13331,1,100,N,N,N,CP_Units,TT_Task,DT_FixedDUR2,RV_OK,TK_Complete,EM01JPI140,01J Model Review Comment Resolution,,,,0,0,0,0,32,0,0,0,,2006-06-21 00:00,2006-06-29 17:00,2007-07-09 08:00,2007-07-09 08:00,,2007-01-27 00:00,2007-01-27 00:00,,,2006-06-19 08:00,2006-06-22 17:00,,,,,PT_Normal,,,,,A/jvh891RQ2ORwFODpLLdg,1ya0n9KXBU+jsorhPD0P0B,,,N,0,0,,,2007-02-01 02:42,2007-02-04 01:05,hbe4678,hbe4678,,,0
1639,12457820,14517,6816040,13331,1,100,N,N,N,CP_Units,TT_Task,DT_FixedDUR2,RV_OK,TK_Complete,EM01JPI141,01J Detail OP's & Services Model Review Mtg,,,,0,0,0,0,8,0,0,0,,2006-07-05 00:00,2006-07-05 00:00,2009-02-13 17:00,2009-02-13 17:00,,2007-01-27 00:00,2007-01-27 00:00,,,2006-07-20 08:00,2006-07-20 17:00,,,,,PT_Normal,,,,,bkqO4gRwT8qa7lPEPLhJdQ,1ya0n9KXBU+jsorhPD0P0B,,,N,0,0,,,2007-02-01 02:42,2007-02-04 01:05,hbe4678,hbe4678,,,0
1640,12457821,14517,6816040,13331,1,100,N,N,N,CP_Units,TT_Task,DT_FixedDUR2,RV_OK,TK_Complete,EM01JPI142,01J OP's & Serv. Model Review Comment Resolution,,,,0,0,0,0,8,0,0,0,,2006-07-06 00:00,2006-07-20 17:00,2009-02-13 17:00,2009-02-13 17:00,,2007-01-27 00:00,2007-01-27 00:00,,,2006-07-20 08:00,2006-07-20 17:00,,,,,PT_Normal,,,,,sWHicSWyS7Sy/MpxrgyDHg,1ya0n9KXBU+jsorhPD0P0B,,,N,0,0,,,2007-02-01 02:42,2007-02-04 01:05,hbe4678,hbe4678,,,0
1641,12457822,14517,6816040,13331,1,100,N,N,N,CP_Units,TT_Task,DT_FixedDUR2,RV_OK,TK_Complete,EM01API200,01A Equipment Location Plans,,,,0,0,0,0,80,0,0,0,,2006-02-27 08:00,2006-09-22 17:00,2007-05-07 08:00,2007-05-07 08:00,,2007-01-27 00:00,2007-01-27 00:00,,,2006-02-27 08:00,2006-03-10 17:00,,,,,PT_Normal,,,,,Rd1WW2GTRKWBOtvw6Bzbog,8P1i/5PCVEKNNz9a4WiNEQ,,,N,0,0,,,2007-02-01 02:42,2007-02-04 01:05,hbe4678,hbe4678,,,0
1642,12457823,14517,6816040,13331,1,100,N,N,N,CP_Units,TT_Task,DT_FixedDUR2,RV_OK,TK_Complete,EM01BPI200,01B Equipment Location Plans,,,,0,0,0,0,216,0,0,0,,2006-02-27 08:00,2006-04-07 17:00,2007-02-06 08:01,2007-02-06 08:01,,2007-01-27 00:00,2007-01-27 00:00,,,2006-02-27 08:00,2006-04-05 17:00,,,,,PT_Normal,,,,,9AJWhONyRL+mztL30YYDpg,VcHv7QmgLkerYZjZ4Fv8cw,,,N,0,0,,,2007-02-01 02:42,2007-02-04 01:05,hbe4678,hbe4678,,,0
1643,12457824,14517,6816040,13331,1,100,N,N,N,CP_Units,TT_Task,DT_FixedDUR2,RV_OK,TK_Complete,EM01CPI200,01C Equipment Location Plans,,,,0,0,0,0,528,0,0,0,,2006-02-27 08:00,2006-12-15 17:00,2007-05-07 08:00,2007-05-07 08:00,,2007-01-27 00:00,2007-01-27 00:00,,,2006-02-27 08:00,2006-06-02 17:00,,,,,PT_Normal,,,,,fLk1bMTvSsWBuGprb2b4OQ,NhbjrS9Jq0ePxIyIibGK/Q,,,N,0,0,,,2007-02-01 02:42,2007-02-04 01:05,hbe4678,hbe4678,,,0
1644,12457825,14517,6816040,13331,1,100,N,N,N,CP_Units,TT_Task,DT_FixedDUR2,RV_OK,TK_Complete,EM01DPI200,01D Equipment Location Plans,,,,0,0,0,0,200,0,0,0,,2006-02-27 08:00,2006-04-07 17:00,2007-04-08 08:01,2007-04-08 08:01,,2007-01-27 00:00,2007-01-27 00:00,,,2006-02-27 08:00,2006-04-03 17:00,,,,,PT_Normal,,,,,b8BaB2KdQeKWyccps6bwlw,I9Br7/Uih0ClmAhX4w1uSg,,,N,0,0,,,2007-02-01 02:42,2007-02-04 01:05,hbe4678,hbe4678,,,0
1645,12457826,14517,6816040,13331,1,100,N,N,N,CP_Units,TT_Task,DT_FixedDUR2,RV_OK,TK_Complete,EM01HPI200,01H Equipment Location Plans,,,,0,0,0,0,200,0,0,0,,2006-02-27 08:00,2006-04-07 17:00,2007-03-27 08:01,2007-03-27 08:01,,2007-01-27 00:00,2007-01-27 00:00,,,2006-02-27 08:00,2006-04-03 17:00,,,,,PT_Normal,,,,,YWRevKPvRKaKDD3Y8zV9sg,MIaKOupLPECSBrQvgycQjg,,,N,0,0,,,2007-02-01 02:42,2007-02-04 01:05,hbe4678,hbe4678,,,0
1646,12457827,14517,6816040,13331,1,100,N,N,N,CP_Units,TT_Task,DT_FixedDUR2,RV_OK,TK_Complete,EM02UPI200,02U Issue U/G Material Final Release,,,,0,0,0,0,80,0,0,0,,2006-05-15 08:00,2006-05-25 17:00,2007-11-12 08:01,2007-11-12 08:01,,2007-01-27 00:00,2007-01-27 00:00,,,2006-05-15 08:00,2006-05-26 17:00,,,,,PT_Normal,,,,,mjWtFFGgR8qeTHrxOTsYDQ,NVW2q1IPdUa1WCd7VTqPCR,,,N,0,0,,,2007-02-01 02:42,2007-02-04 01:05,hbe4678,hbe4678,,,0
1647,12457828,14517,6816040,13331,1,100,N,N,N,CP_Units,TT_Task,DT_FixedDUR2,RV_OK,TK_Complete,EM03UPI200,03U Issue U/G Material Final Release (90%),,,,0,0,0,0,80,0,0,0,,2006-05-22 00:00,2006-06-14 00:00,2007-11-12 08:01,2007-11-12 08:01,,2007-01-27 00:00,2007-01-27 00:00,,,2006-05-29 08:00,2006-06-09 17:00,,,,,PT_Normal,,,,,0JzTmNxXQVWy4cq0xesYRw,nb04AZ7zhky/VqO4J/pgPg,,,N,0,0,,,2007-02-01 02:42,2007-02-04 01:05,hbe4678,hbe4678,,,0
1648,12457829,14517,6816040,13331,1,100,N,N,N,CP_Units,TT_Task,DT_FixedDUR2,RV_OK,TK_Complete,EM05UPI200,05U Issue U/G Material Final Release,,,,0,0,0,0,80,0,0,0,,2006-06-09 08:00,2006-07-26 17:00,2008-01-19 08:01,2008-01-19 08:01,,2007-01-27 00:00,2007-01-27 00:00,,,2006-06-09 08:00,2006-06-22 17:00,,,,,PT_Normal,,,,,3R+c8bXxTEWbtLTYi/tMjA,ImCwzyYgMkSJRkmfX3bXew,,,N,0,0,,,2007-02-01 02:42,2007-02-04 01:05,hbe4678,hbe4678,,,0
1649,12457830,14517,6816040,13331,1,100,N,N,N,CP_Units,TT_Task,DT_FixedDUR2,RV_OK,TK_Complete,EM04API200,04A Issue U/G Material Final Release,,,,0,0,0,0,80,0,0,0,,2006-10-16 08:00,2006-10-27 17:00,2007-07-04 08:01,2007-07-04 08:01,,2007-01-27 00:00,2007-01-27 00:00,,,2006-10-16 08:00,2006-10-27 17:00,,,,,PT_Normal,,,,,tDVAtJnASsizOdmAzhFwpw,ImCwzyYgMkSJRkmfX3bXew,,,N,0,0,,,2007-02-01 02:42,2007-02-04 01:05,hbe4678,hbe4678,,,0
1650,12457831,14517,6816040,13331,1,100,N,N,N,CP_Units,TT_Task,DT_FixedDUR2,RV_OK,TK_Complete,EM01BPI133,01B IDP - Plant Layout,,,,0,0,0,0,40,0,0,0,,2006-03-06 00:00,2006-03-10 00:00,2007-05-07 08:00,2007-05-07 08:00,,2007-01-27 00:00,2007-01-27 00:00,,,2006-03-13 08:00,2006-03-17 17:00,,,,,PT_Normal,,,,,CAu1pOJaR2qwBwx5AASGQg,Gknh/2z/BEmeokw4Mxnolx,,,N,0,0,,,2007-02-01 02:42,2007-02-04 01:05,hbe4678,hbe4678,,,0
1651,12457832,14517,6816040,13331,1,100,N,N,N,CP_Units,TT_Task,DT_FixedDUR2,RV_OK,TK_Complete,EM01BPI136,01B IDP - Detail Design,,,,0,0,0,0,16,0,0,0,,2006-08-22 08:00,2006-09-11 08:00,2007-05-07 08:00,2007-05-07 08:00,,2007-01-27 00:00,2007-01-27 00:00,,,2006-08-22 08:00,2006-08-23 17:00,,,,,PT_Normal,,,,,YuC9XrWBRs6UmoB8oPIpvw,Nui8F/JTaUuhv5XJgSF1Vx,,,N,0,0,,,2007-02-01 02:42,2007-02-04 01:05,hbe4678,hbe4678,,,0
1652,12457833,14517,6816040,13331,1,100,N,N,N,CP_Units,TT_Task,DT_FixedDUR2,RV_OK,TK_Complete,EM01CPI136,01C IDP - Detail Design,,,,0,0,0,0,40,0,0,0,,2006-12-11 08:00,2006-12-13 17:00,2007-05-31 08:01,2007-05-31 08:01,,2007-01-27 00:00,2007-01-27 00:00,,,2006-12-11 08:00,2006-12-18 17:00,,,,,PT_Normal,,,,,F/lVh3ahToeK/HIA0pL7cA,Nui8F/JTaUuhv5XJgSF1Vx,,,N,0,0,,,2007-02-01 02:42,2007-02-04 01:05,hbe4678,hbe4678,,,0
1653,12457834,14517,6816040,13331,1,100,N,N,N,CP_Units,TT_Task,DT_FixedDUR2,RV_OK,TK_Complete,EM01DPI133,01D IDP - Plant Layout,,,,0,0,0,0,16,0,0,0,,2006-03-13 00:00,2006-03-14 00:00,2007-04-08 08:01,2007-04-08 08:01,,2007-01-27 00:00,2007-01-27 00:00,,,2006-03-16 08:00,2006-03-17 17:00,,,,,PT_Normal,,,,,Ae/yciH8TYSsKO35IA1RZw,Gknh/2z/BEmeokw4Mxnolx,,,N,0,0,,,2007-02-01 02:42,2007-02-04 01:05,hbe4678,hbe4678,,,0
1654,12457835,14517,6816040,13331,1,100,N,N,N,CP_Units,TT_Task,DT_FixedDUR2,RV_OK,TK_Complete,EM01DPI136,01D IDP - Detail Design,,,,0,0,0,0,16,0,0,0,,2006-09-14 08:00,2006-12-08 00:00,2007-05-16 08:01,2007-05-16 08:01,,2007-01-27 00:00,2007-01-27 00:00,,,2006-09-14 08:00,2006-09-15 17:00,,,,,PT_Normal,,,,,07VOmN1fRK6T+aut1hFY6g,Nui8F/JTaUuhv5XJgSF1Vx,,,N,0,0,,,2007-02-01 02:42,2007-02-04 01:05,hbe4678,hbe4678,,,0
1655,12457836,14517,6816040,13331,1,100,N,N,N,CP_Units,TT_Task,DT_FixedDUR2,RV_OK,TK_Complete,EM01JPI133,01J IDP - Plant Layout,,,,0,0,0,0,8,0,0,0,,2006-07-03 08:00,2006-07-03 17:00,2007-07-09 08:00,2007-07-09 08:00,,2007-01-27 00:00,2007-01-27 00:00,,,2006-07-03 08:00,2006-07-03 17:00,,,,,PT_Normal,,,,,3bFLNPLaSjSHrjpmkXC4yA,Gknh/2z/BEmeokw4Mxnolx,,,N,0,0,,,2007-02-01 02:42,2007-02-04 01:05,hbe4678,hbe4678,,,0
1656,12457837,14517,6816040,13331,1,100,N,N,N,CP_Units,TT_Task,DT_FixedDUR2,RV_OK,TK_Complete,EM01JPI136,01J IDP - Detail Design,,,,0,0,0,0,16,0,0,0,,2006-07-21 08:00,2006-07-25 17:00,2009-02-13 17:00,2009-02-13 17:00,,2007-01-27 00:00,2007-01-27 00:00,,,2006-07-21 08:00,2006-07-24 17:00,,,,,PT_Normal,,,,,0Fna2t+6Tyqlbrw8HMz1tA,Nui8F/JTaUuhv5XJgSF1Vx,,,N,0,0,,,2007-02-01 02:42,2007-02-04 01:05,hbe4678,hbe4678,,,0
1657,12457838,14517,6816040,13331,1,100,N,N,N,CP_Units,TT_Task,DT_FixedDUR2,RV_OK,TK_Complete,EM01YPI133,01Y IDP - Plant Layout,,,,0,0,0,0,16,0,0,0,,2006-02-27 08:00,2006-02-28 17:00,2007-03-13 08:00,2007-03-13 08:00,,2007-01-27 00:00,2007-01-27 00:00,,,2006-02-27 08:00,2006-02-28 17:00,,,,,PT_Normal,,,,,Hz6daM9UT6Oy78PNoE94iw,Gknh/2z/BEmeokw4Mxnolx,,,N,0,0,,,2007-02-01 02:42,2007-02-04 01:05,hbe4678,hbe4678,,,0
1658,12457839,14517,6816040,13331,1,100,N,N,N,CP_Units,TT_Task,DT_FixedDUR2,RV_OK,TK_Complete,EM01YPI136,01Y IDP - Detail Design,,,,0,0,0,0,40,0,0,0,,2006-06-07 00:00,2006-06-12 17:00,2007-03-13 08:00,2007-03-13 08:00,,2007-01-27 00:00,2007-01-27 00:00,,,2006-06-12 08:00,2006-06-16 17:00,,,,,PT_Normal,,,,,VWcIJg6ETdSO3woseQ4zPA,Nui8F/JTaUuhv5XJgSF1Vx,,,N,0,0,,,2007-02-01 02:42,2007-02-04 01:05,hbe4678,hbe4678,,,0
1659,12457840,14517,6816040,13331,1,100,N,N,N,CP_Units,TT_Task,DT_FixedDUR2,RV_OK,TK_Complete,EM01UPIPAC,01U Model Review Mtg  -Plant Air,,,,0,0,0,0,40,0,0,0,,2005-11-28 00:00,2005-12-01 00:00,2007-03-13 08:00,2007-03-13 08:00,,2007-01-27 00:00,2007-01-27 00:00,,,2005-11-14 08:00,2005-11-18 17:00,,,,,PT_Normal,,,,,lHhKqpbFRxmRMkY5EHGhfQ,+t17HU7V8E+CAyljCcKFkB,,,N,0,0,,,2007-02-01 02:42,2007-02-04 01:05,hbe4678,hbe4678,,,0
1660,12457841,14517,6816040,13331,1,100,N,N,N,CP_Units,TT_Task,DT_FixedDUR2,RV_OK,TK_Complete,EM01UPIPAB,01U IDP - Plant Layout  - Plant Air,,,,0,0,0,0,40,0,0,0,,2005-11-01 00:00,2005-11-11 00:00,2007-03-13 08:00,2007-03-13 08:00,,2007-01-27 00:00,2007-01-27 00:00,,,2005-11-16 08:00,2005-11-22 17:00,,,,,PT_Normal,,,,,6pkF6pvuTza6DODRZn8qeA,ApeoIOK8RU+X28tjjLnY+B,,,N,0,0,,,2007-02-01 02:42,2007-02-04 01:05,hbe4678,hbe4678,,,0
1661,12457842,14517,6816040,13331,1,100,N,N,N,CP_Units,TT_Task,DT_FixedDUR2,RV_OK,TK_Complete,EM01UPIBSB,01U IDP - Plant Layout   - Benfield Sewer,,,,0,0,0,0,40,0,0,0,,2005-11-01 00:00,2005-11-11 00:00,2007-03-13 08:00,2007-03-13 08:00,,2007-01-27 00:00,2007-01-27 00:00,,,2005-11-14 08:00,2005-11-18 17:00,,,,,PT_Normal,,,,,npn0VWxPTBK5lrgFChQGvw,+5+0rWtbTEqVwNm82zrwqx,,,N,0,0,,,2007-02-01 02:42,2007-02-04 01:05,hbe4678,hbe4678,,,0
1662,12457843,14517,6816040,13331,1,100,N,N,N,CP_Units,TT_Task,DT_FixedDUR2,RV_OK,TK_Complete,EM01UPIPWC,01U Model Review Mtg  -Potable Water,,,,0,0,0,0,40,0,0,0,,2005-11-28 00:00,2005-12-01 00:00,2007-03-13 08:00,2007-03-13 08:00,,2007-01-27 00:00,2007-01-27 00:00,,,2005-11-14 08:00,2005-11-18 17:00,,,,,PT_Normal,,,,,Tu+35+v3ROWtX7E9JwCxOQ,VGSyvsBRS0uPXOAC/vRzCh,,,N,0,0,,,2007-02-01 02:42,2007-02-04 01:05,hbe4678,hbe4678,,,0
1663,12457844,14517,6816040,13331,1,100,N,N,N,CP_Units,TT_Task,DT_FixedDUR2,RV_OK,TK_Complete,EM01UPIPWB,01U IDP - Plant Layout  - Potable Water,,,,0,0,0,0,40,0,0,0,,2005-11-01 00:00,2005-11-11 00:00,2007-03-13 08:00,2007-03-13 08:00,,2007-01-27 00:00,2007-01-27 00:00,,,2005-11-16 08:00,2005-11-22 17:00,,,,,PT_Normal,,,,,2McAuavHRfy+FM1v8FV9CQ,mv6FR/rkMEiYte0kwHQl3R,,,N,0,0,,,2007-02-01 02:42,2007-02-04 01:05,hbe4678,hbe4678,,,0
1664,12457845,14517,6816040,13331,1,100,N,N,N,CP_Units,TT_Task,DT_FixedDUR2,RV_OK,TK_Complete,EM01UPIBSC,01U Model Review Mtg (HOC/MEC) - Benfield Sewer,,,,0,0,0,0,40,0,0,0,,2005-11-23 00:00,2005-11-23 00:00,2007-03-13 08:00,2007-03-13 08:00,,2007-01-27 00:00,2007-01-27 00:00,,,2005-11-15 08:00,2005-11-21 17:00,,,,,PT_Normal,,,,,N8lop9eYQUiYN8qHkpR2Zg,dxdcWt8qE0aMqysFwXckCx,,,N,0,0,,,2007-02-01 02:42,2007-02-04 01:05,hbe4678,hbe4678,,,0
1665,12457846,14517,6816040,13331,1,100,N,N,N,CP_Drtn,TT_Task,DT_FixedDUR2,RV_OK,TK_Complete,EM01API131,01A Model Review Comment Resolution,,,,0,0,0,0,56,0,0,0,,2006-04-04 00:00,2006-05-05 00:00,2007-05-07 08:00,2007-05-07 08:00,,2007-01-27 00:00,2007-01-27 00:00,,,2006-03-27 08:00,2006-04-04 17:00,,,,,PT_Normal,,,,,6z15KIk8R12lGwa8jDHO+A,,,,N,0,0,,,2007-02-01 02:42,2007-02-04 01:05,hbe4678,hbe4678,,,0
1666,12457847,14517,6816040,13331,1,100,N,N,N,CP_Drtn,TT_Task,DT_FixedDUR2,RV_OK,TK_Complete,EM01BPI121,01B Model Review Comment Resolution,,,,0,0,0,0,40,0,0,0,,2006-02-27 00:00,2006-03-03 00:00,2007-05-07 08:00,2007-05-07 08:00,,2007-01-27 00:00,2007-01-27 00:00,,,2006-03-08 08:00,2006-03-14 17:00,,,,,PT_Normal,,,,,mA3dCkobRsm/NCbSi/u30g,,,,N,0,0,,,2007-02-01 02:42,2007-02-04 01:05,hbe4678,hbe4678,,,0
1667,12457848,14517,6816040,13331,1,100,N,N,N,CP_Units,TT_Task,DT_FixedDUR2,RV_OK,TK_Complete,EM01API141,01A Detail OP's & Services Model Review Mtg,,,,0,0,0,0,40,0,0,0,,2006-07-26 00:00,2006-07-27 00:00,2007-08-27 08:01,2007-08-27 08:01,,2007-01-27 00:00,2007-01-27 00:00,,,2006-08-22 08:00,2006-08-28 17:00,,,,,PT_Normal,,,,,zpqnDLi0SXG9cj+RPX6n4Q,GTmYeTxKB0q3M7gLe9fwtB,,,N,0,0,,,2007-02-01 02:42,2007-02-04 01:05,hbe4678,hbe4678,,,0
1668,12457849,14517,6816040,13331,1,100,N,N,N,CP_Units,TT_Task,DT_FixedDUR2,RV_OK,TK_Complete,EM01API143,01A OP's & Serv. Model Review Comments Resolution,,,,0,0,0,0,40,0,0,0,,2006-07-28 00:00,2006-08-14 00:00,2007-08-27 08:01,2007-08-27 08:01,,2007-01-27 00:00,2007-01-27 00:00,,,2006-08-21 08:00,2006-08-25 17:00,,,,,PT_Normal,,,,,7kb5R8rdTBWvqGkLXWnbBQ,+EVYbxlg9ke8Tbk2eaPAmg,,,N,0,0,,,2007-02-01 02:42,2007-02-04 01:05,hbe4678,hbe4678,,,0
1669,12457850,14517,6816040,13331,1,100,N,N,N,CP_Units,TT_Task,DT_FixedDUR2,RV_OK,TK_Complete,EM01BPI141,01B Detail OP's & Services Model Review Mtg,,,,0,0,0,0,40,0,0,0,,2006-07-25 08:00,2006-07-26 17:00,2007-05-07 08:00,2007-05-07 08:00,,2007-01-27 00:00,2007-01-27 00:00,,,2006-07-25 08:00,2006-07-31 17:00,,,,,PT_Normal,,,,,fDKBu7RdQlCOFUaEDJ55lA,+EVYbxlg9ke8Tbk2eaPAmg,,,N,0,0,,,2007-02-01 02:42,2007-02-04 01:05,hbe4678,hbe4678,,,0
1670,12457851,14517,6816040,13331,1,100,N,N,N,CP_Units,TT_Task,DT_FixedDUR2,RV_OK,TK_Complete,EM01BPI143,01B OP's & Serv. Model Review Comments Resolution,,,,0,0,0,0,40,0,0,0,,2006-07-27 08:00,2006-08-21 17:00,2007-05-07 08:00,2007-05-07 08:00,,2007-01-27 00:00,2007-01-27 00:00,,,2006-07-27 08:00,2006-08-02 17:00,,,,,PT_Normal,,,,,LCRx4CrySfGO+Ahd4g7MIQ,7WgTa+mHG0ugT8+HUCSJFw,,,N,0,0,,,2007-02-01 02:42,2007-02-04 01:05,hbe4678,hbe4678,,,0
1671,12457852,14517,6816040,13331,1,100,N,N,N,CP_Units,TT_Task,DT_FixedDUR2,RV_OK,TK_Complete,EM01DPI141,01D Detail OP's & Services Model Review Mtg,,,,0,0,0,0,40,0,0,0,,2006-08-03 08:00,2006-08-31 00:00,2007-05-16 08:01,2007-05-16 08:01,,2007-01-27 00:00,2007-01-27 00:00,,,2006-08-03 08:00,2006-08-09 17:00,,,,,PT_Normal,,,,,D5m+uuknSOy26t/MTk/fwA,N4dm1nWGTEqjQ24QNaxUrQ,,,N,0,0,,,2007-02-01 02:42,2007-02-04 01:05,hbe4678,hbe4678,,,0
1672,12457853,14517,6816040,13331,1,100,N,N,N,CP_Units,TT_Task,DT_FixedDUR2,RV_OK,TK_Complete,EM01YPI134,01Y Detail Model Development,,,,0,0,0,0,200,0,0,0,,2006-03-20 08:00,2006-04-26 17:00,2007-03-13 08:00,2007-03-13 08:00,,2007-01-27 00:00,2007-01-27 00:00,,,2006-03-20 08:00,2006-04-26 17:00,,,,,PT_Normal,,,,,MWOkv1yCSuic+WS3M9vxjA,sMqM3yF3+0CrGK8Ohpq/ah,,,N,0,0,,,2007-02-01 02:42,2007-02-04 01:05,hbe4678,hbe4678,,,0
1673,12457854,14517,6816040,13331,1,100,N,N,N,CP_Units,TT_Task,DT_FixedDUR2,RV_OK,TK_Complete,EM01YPI135,01Y A/G Piping Iso's - Issue IFC,,,,0,0,0,0,80,0,0,0,,2006-06-23 00:00,2006-07-31 00:00,2007-06-12 08:00,2007-06-12 08:00,,2007-01-27 00:00,2007-01-27 00:00,,,2006-06-26 08:00,2006-07-07 17:00,,,,,PT_Normal,,,,,8dgwXY65QEu4EXgx1GGX4A,YGDFUUmznUqOk6gvti9Onx,,,N,0,0,,,2007-02-01 02:42,2007-02-04 01:05,hbe4678,hbe4678,,,0
1674,12457855,14517,6816040,13331,1,100,N,N,N,CP_Units,TT_Task,DT_FixedDUR2,RV_OK,TK_Complete,EM01YPI138,01Y Design / Issue Pipe Supports IFC,,,,0,0,0,0,240,0,0,0,,2006-04-19 08:00,2006-07-31 00:00,2007-07-16 08:00,2007-07-16 08:00,,2007-01-27 00:00,2007-01-27 00:00,,,2006-04-19 08:00,2006-05-31 17:00,,,,,PT_Normal,,,,,/HoYXnU1RVakiM3zJdy4QQ,mWGIMmSHdkmqP7nlO76g2B,,,N,0,0,,,2007-02-01 02:42,2007-02-04 01:05,hbe4678,hbe4678,,,0
1675,12457856,14517,6816040,13331,1,100,N,N,N,CP_Units,TT_Task,DT_FixedDUR2,RV_OK,TK_Complete,EM01UPISSF,"01U IDP - Detail Design  - Metalic Piping (SY, CW, PA & BS)",,,,0,0,0,0,40,0,0,0,,2006-03-13 08:00,2006-05-03 17:00,2007-03-13 08:00,2007-03-13 08:00,,2007-01-27 00:00,2007-01-27 00:00,,,2006-03-13 08:00,2006-03-17 17:00,,,,,PT_Normal,,,,,hmbWLXNtTfGF4GOK8sMD6A,dclwTSi770K05SWW9n0NBR,,,N,0,0,,,2007-02-01 02:42,2007-02-04 01:05,hbe4678,hbe4678,,,0
1676,12457857,14517,6816040,13331,1,100,N,N,N,CP_Units,TT_Task,DT_FixedDUR2,RV_OK,TK_Complete,EM01UPISSG,"01U Iso Issue IFC   - Metalic Piping SY, CW, Pa & BS",,,,0,0,0,0,56,0,0,0,,2006-05-04 08:00,2006-05-18 00:00,2007-10-31 08:01,2007-10-31 08:01,,2007-01-27 00:00,2007-01-27 00:00,,,2006-05-04 08:00,2006-05-12 17:00,,,,,PT_Normal,,,,,RyTQRNL+SYitNTAZssUavA,9f4Jr+os3EKhwpuzJNiSJx,,,N,0,0,,,2007-02-01 02:42,2007-02-04 01:05,hbe4678,hbe4678,,,0
1677,12457858,14517,6816040,13331,1,100,N,N,N,CP_Units,TT_Task,DT_FixedDUR2,RV_OK,TK_Complete,EM01UPISSB,01U IDP - Plant Layout  - Sanitary Sewer,,,,0,0,0,0,40,0,0,0,,2005-11-01 00:00,2005-11-11 00:00,2007-03-13 08:00,2007-03-13 08:00,,2007-01-27 00:00,2007-01-27 00:00,,,2005-11-16 08:00,2005-11-22 17:00,,,,,PT_Normal,,,,,OSHdwxDWTmK5s9IxTRfJpA,Cftqk+q99k6baQ0S7gbRDh,,,N,0,0,,,2007-02-01 02:42,2007-02-04 01:05,hbe4678,hbe4678,,,0
1678,12457859,14517,6816040,13331,1,100,N,N,N,CP_Units,TT_Task,DT_FixedDUR2,RV_OK,TK_Complete,EM01UPICWG,01U U/G Plan Dwgs Issue IFC,,,,0,0,0,0,96,0,0,0,,2006-05-04 08:00,2006-07-31 00:00,2007-10-31 08:01,2007-10-31 08:01,,2007-01-27 00:00,2007-01-27 00:00,,,2006-05-04 08:00,2006-05-19 17:00,,,,,PT_Normal,,,,,SDPrzXhFRnOS5SIk8omdPQ,+0O/d5bfJUWMlq7sQZmkLh,,,N,0,0,,,2007-02-01 02:42,2007-02-04 01:05,hbe4678,hbe4678,,,0
1679,12457860,14517,6816040,13331,1,100,N,N,N,CP_Units,TT_Task,DT_FixedDUR2,RV_OK,TK_Complete,EM01UPICWB,01U IDP - Plant Layout  - Cooling Water,,,,0,0,0,0,40,0,0,0,,2005-11-01 00:00,2005-11-11 00:00,2007-03-13 08:00,2007-03-13 08:00,,2007-01-27 00:00,2007-01-27 00:00,,,2005-11-16 08:00,2005-11-22 17:00,,,,,PT_Normal,,,,,MOQuIQCCR8mPlxcJDO8shA,vYP077uuOU6vJmMoN7LA9x,,,N,0,0,,,2007-02-01 02:42,2007-02-04 01:05,hbe4678,hbe4678,,,0
1680,12457861,14517,6816040,13331,1,100,N,N,N,CP_Units,TT_Task,DT_FixedDUR2,RV_OK,TK_Complete,EM01UPICWC,01U Model Review Mtg  - Cooling Water,,,,0,0,0,0,40,0,0,0,,2005-11-28 08:00,2005-12-01 17:00,2007-03-13 08:00,2007-03-13 08:00,,2007-01-27 00:00,2007-01-27 00:00,,,2005-11-28 08:00,2005-12-02 17:00,,,,,PT_Normal,,,,,rDehffM3RUWZ+hfrv8+EGQ,iQ+5IB24nEW78uaKwAajsR,,,N,0,0,,,2007-02-01 02:42,2007-02-04 01:05,hbe4678,hbe4678,,,0
1681,12457862,14517,6816040,13331,1,100,N,N,N,CP_Units,TT_Task,DT_FixedDUR2,RV_OK,TK_Complete,EM01UPISSC,01U Model Review Mtg - Sanitary Sewer,,,,0,0,0,0,40,0,0,0,,2005-11-28 08:00,2005-12-01 17:00,2007-03-13 08:00,2007-03-13 08:00,,2007-01-27 00:00,2007-01-27 00:00,,,2005-11-28 08:00,2005-12-02 17:00,,,,,PT_Normal,,,,,4+HmHv+7RriJnWTiy71LOQ,dUPAyMuPRU+SCPTQoxS97x,,,N,0,0,,,2007-02-01 02:42,2007-02-04 01:05,hbe4678,hbe4678,,,0
1682,12457863,14517,6816040,13331,1,100,N,N,N,CP_Units,TT_Task,DT_FixedDUR2,RV_OK,TK_Complete,EM01UPIFWC,01U Model Review Mtg  - Firewater,,,,0,0,0,0,40,0,0,0,,2005-11-28 08:00,2005-12-01 17:00,2009-02-15 08:01,2009-02-15 08:01,,2007-01-27 00:00,2007-01-27 00:00,,,2005-11-28 08:00,2005-12-02 17:00,,,,,PT_Normal,,,,,Mx2jKybRSVmBBxDrNDc5YA,eMPi1EGQK0uP1wGOzmS3iR,,,N,0,0,,,2007-02-01 02:42,2007-02-04 01:05,hbe4678,hbe4678,,,0
1683,12457864,14517,6816040,13331,1,100,N,N,N,CP_Units,TT_Task,DT_FixedDUR2,RV_OK,TK_Complete,EM01UPIFWF,01U IDP - Detail Design  - HDPE Piping (FW),,,,0,0,0,0,40,0,0,0,,2006-03-13 08:00,2006-03-17 17:00,2007-03-13 08:00,2007-03-13 08:00,,2007-01-27 00:00,2007-01-27 00:00,,,2006-03-13 08:00,2006-03-17 17:00,,,,,PT_Normal,,,,,09BXOXNcThWTpD6s1tptpw,HnykSABAgEOlh/VjnwEMfB,,,N,0,0,,,2007-02-01 02:42,2007-02-04 01:05,hbe4678,hbe4678,,,0
1684,12457865,14517,6816040,13331,1,100,N,N,N,CP_Units,TT_Task,DT_FixedDUR2,RV_OK,TK_Complete,EM01UPIFWG,01U Iso Issue IFC   - HDPE Piping FW,,,,0,0,0,0,96,0,0,0,,2006-03-27 08:00,2006-03-31 17:00,2007-08-06 08:01,2007-08-06 08:01,,2007-01-27 00:00,2007-01-27 00:00,,,2006-03-27 08:00,2006-04-11 17:00,,,,,PT_Normal,,,,,mG/m6InSRIOelY3Mw297rQ,RybCXZLpmkKMhEj0L7iSAh,,,N,0,0,,,2007-02-01 02:42,2007-02-04 01:05,hbe4678,hbe4678,,,0
1685,12457866,14517,6816040,13331,1,100,N,N,N,CP_Units,TT_Task,DT_FixedDUR2,RV_OK,TK_Complete,EM01UPIFWB,01U IDP - Plant Layout  - Firewater,,,,0,0,0,0,40,0,0,0,,2005-11-01 00:00,2005-11-11 00:00,2007-03-13 08:00,2007-03-13 08:00,,2007-01-27 00:00,2007-01-27 00:00,,,2005-11-16 08:00,2005-11-22 17:00,,,,,PT_Normal,,,,,tGOcEv7MRHmJvXf5xDOzHQ,dKi+PuDOlEqKk05soAAXSB,,,N,0,0,,,2007-02-01 02:42,2007-02-04 01:05,hbe4678,hbe4678,,,0
1686,12457867,14517,6816040,13331,1,100,N,N,N,CP_Units,TT_Task,DT_FixedDUR2,RV_OK,TK_Complete,EM01UPIWWC,01U Model Review Mtg  - Waste Water,,,,0,0,0,0,40,0,0,0,,2005-11-28 00:00,2005-12-01 00:00,2007-03-13 08:00,2007-03-13 08:00,,2007-01-27 00:00,2007-01-27 00:00,,,2005-11-14 08:00,2005-11-18 17:00,,,,,PT_Normal,,,,,lLXSsAp6QMaiuANalSMJDw,d+yd0BFvUUCz0IxhU4YC5R,,,N,0,0,,,2007-02-01 02:42,2007-02-04 01:05,hbe4678,hbe4678,,,0
1687,12457868,14517,6816040,13331,1,100,N,N,N,CP_Units,TT_Task,DT_FixedDUR2,RV_OK,TK_Complete,EM01UPIWWF,01U IDP - Detail Design - Other HDPE (WW & DW),,,,0,0,0,0,40,0,0,0,,2006-03-13 08:00,2006-04-04 00:00,2007-03-13 08:00,2007-03-13 08:00,,2007-01-27 00:00,2007-01-27 00:00,,,2006-03-13 08:00,2006-03-17 17:00,,,,,PT_Normal,,,,,XddnUEhgSRu6B8zGeF4ESA,s7lVEJh/E0G39DsF8b+Bix,,,N,0,0,,,2007-02-01 02:42,2007-02-04 01:05,hbe4678,hbe4678,,,0
1688,12457869,14517,6816040,13331,1,100,N,N,N,CP_Units,TT_Task,DT_FixedDUR2,RV_OK,TK_Complete,EM01UPIWWG,01U Iso Issue IFC - Other HDPE WW & DW,,,,0,0,0,0,56,0,0,0,,2006-04-11 08:00,2006-04-14 00:00,2007-10-31 08:01,2007-10-31 08:01,,2007-01-27 00:00,2007-01-27 00:00,,,2006-04-11 08:00,2006-04-21 17:00,,,,,PT_Normal,,,,,wFHVBMsHTMGO1MLdjF/gow,jRqIucH67E2hZNOarSPCVR,,,N,0,0,,,2007-02-01 02:42,2007-02-04 01:05,hbe4678,hbe4678,,,0
1689,12457870,14517,6816040,13331,1,100,N,N,N,CP_Units,TT_Task,DT_FixedDUR2,RV_OK,TK_Complete,EM01UPIWWB,01U IDP - Plant Layout  - Waste Water,,,,0,0,0,0,40,0,0,0,,2005-11-01 00:00,2005-11-11 00:00,2007-03-13 08:00,2007-03-13 08:00,,2007-01-27 00:00,2007-01-27 00:00,,,2005-11-16 08:00,2005-11-22 17:00,,,,,PT_Normal,,,,,I5oNSZFUT3aKLQXIy9/5Lw,w+8HtaZjiEeXvdWLCIE+DR,,,N,0,0,,,2007-02-01 02:42,2007-02-04 01:05,hbe4678,hbe4678,,,0
1690,12457871,14517,6816040,13331,1,100,N,N,N,CP_Units,TT_Task,DT_FixedDUR2,RV_OK,TK_Complete,EM01UPI186,"01U Planning Release - Common, SS, FW, CW, WW, AP, WP",,,,0,0,0,0,40,0,0,0,,2005-11-11 00:00,2006-03-03 17:00,2007-03-13 08:00,2007-03-13 08:00,,2007-01-27 00:00,2007-01-27 00:00,,,2006-01-09 08:00,2006-01-13 17:00,,,,,PT_Normal,,,,,Pl4j2UN3ShC49fm3wtp5PA,AGdEXDYXeU2Mi26xOnAn4h,,,N,0,0,,,2007-02-01 02:42,2007-02-04 01:05,hbe4678,hbe4678,,,0
1691,12457872,14517,6816040,13331,1,100,N,N,N,CP_Units,TT_Task,DT_FixedDUR2,RV_OK,TK_Complete,EM01UPI200,01U Issue U/G Material Final Release 90%,,,,0,0,0,0,80,0,0,0,,2006-05-18 00:00,2006-06-12 00:00,2007-10-31 08:01,2007-10-31 08:01,,2007-01-27 00:00,2007-01-27 00:00,,,2006-05-24 08:00,2006-06-06 17:00,,,,,PT_Normal,,,,,ZElJMF1ASUGCuX0NXfUD/w,ajl3f7RIS0eMA/cLgA0KtR,,,N,0,0,,,2007-02-01 02:42,2007-02-04 01:05,hbe4678,hbe4678,,,0
1692,12457873,14517,6816040,13331,1,100,N,N,N,CP_Units,TT_Task,DT_FixedDUR2,RV_OK,TK_Complete,EM01API133,01A IDP - Plant Layout,,,,0,0,0,0,24,0,0,0,,2006-05-05 00:00,2006-05-09 00:00,2007-05-07 08:00,2007-05-07 08:00,,2007-01-27 00:00,2007-01-27 00:00,,,2006-05-02 08:00,2006-05-04 17:00,,,,,PT_Normal,,,,,iorbWH8LQ9uRtzqe8Uksxg,58nmqi+T00OyhFGWNPmctR,,,N,0,0,,,2007-02-01 02:42,2007-02-04 01:05,hbe4678,hbe4678,,,0
1693,12457874,14517,6816040,13331,1,100,N,N,N,CP_Units,TT_Task,DT_FixedDUR2,RV_OK,TK_Complete,EM01API136,01A IDP - Detail Design,,,,0,0,0,0,16,0,0,0,,2006-08-21 08:00,2006-08-28 17:00,2007-08-27 08:01,2007-08-27 08:01,,2007-01-27 00:00,2007-01-27 00:00,,,2006-08-21 08:00,2006-08-22 17:00,,,,,PT_Normal,,,,,bO1w+rVOQJCHq44jhSP4mA,Gknh/2z/BEmeokw4Mxnolx,,,N,0,0,,,2007-02-01 02:42,2007-02-04 01:05,hbe4678,hbe4678,,,0
1694,12457875,14517,6816040,13331,1,100,N,N,N,CP_Units,TT_Task,DT_FixedDUR2,RV_OK,TK_Complete,EM01BPI135,01B A/G Piping Iso's - Issue IFC,,,,0,0,0,0,120,0,0,0,,2006-08-21 00:00,2006-12-15 17:00,2007-05-07 08:00,2007-05-07 08:00,,2007-01-27 00:00,2007-01-27 00:00,,,2006-08-28 08:00,2006-09-15 17:00,,,,,PT_Normal,,,,,wXuaVb6aTdyDwhLs+JJ16Q,GS4+yTvmdEWQOvQwtoCW+B,,,N,0,0,,,2007-02-01 02:42,2007-02-04 01:05,hbe4678,hbe4678,,,0
1695,12457876,14517,6816040,13331,1,100,N,N,N,CP_Units,TT_Task,DT_FixedDUR2,RV_OK,TK_Complete,EM01BPI138,01B Design / Issue Pipe Supports IFC,,,,0,0,0,0,160,0,0,0,,2006-08-21 00:00,2006-12-15 17:00,2007-08-17 08:00,2007-08-17 08:00,,2007-01-27 00:00,2007-01-27 00:00,,,2006-08-28 08:00,2006-09-22 17:00,,,,,PT_Normal,,,,,ctLyWZ1yR2WsWo5yUiJ7QA,AY2tU9mqEE2njPnHD+dx1h,,,N,0,0,,,2007-02-01 02:42,2007-02-04 01:05,hbe4678,hbe4678,,,0
1696,12457877,14517,6816040,13331,1,100,N,N,N,CP_Units,TT_Task,DT_FixedDUR2,RV_OK,TK_Complete,EM01CPI120,01C Plant Layout Model,,,,0,0,0,0,528,0,0,0,,2005-09-23 08:00,2006-11-08 17:00,2007-05-07 08:00,2007-05-07 08:00,,2007-01-27 00:00,2007-01-27 00:00,,,2005-09-23 08:00,2006-01-03 17:00,,,,,PT_Normal,,,,,4SYMNVtvRgKS25NkrUB0ew,K8bjSFc9F0G4nKrHOAJSrh,,,N,0,0,,,2007-02-01 02:42,2007-02-04 01:05,hbe4678,hbe4678,,,0
1697,12457878,14517,6816040,10687,1,100,N,N,N,CP_Units,TT_Task,DT_FixedDUR2,RV_OK,TK_Complete,EM01CPI132,01C Planning Release,,,,0,0,0,0,8,0,0,0,2006-11-27 00:00,2006-12-11 08:00,2006-12-18 00:00,2007-05-07 08:00,2007-05-07 08:00,,2007-01-27 00:00,2007-01-27 00:00,,,2006-12-11 08:00,2006-12-11 17:00,,,,CS_MSOA,PT_Normal,,,,,erqk/0uJQzSaOUGrJsUlxQ,OYLtFVhVzkKaKF6UG55Ldx,,,N,0,0,,,2007-02-01 02:42,2007-02-04 01:05,hbe4678,hbe4678,,,0
1698,12457879,14517,6816040,13331,1,100,N,N,N,CP_Units,TT_Task,DT_FixedDUR2,RV_OK,TK_Complete,EM01CPI134,01C Detail Model Development,,,,0,0,0,0,120,0,0,0,,2006-10-30 08:00,2006-11-09 00:00,2007-05-31 08:01,2007-05-31 08:01,,2007-01-27 00:00,2007-01-27 00:00,,,2006-10-30 08:00,2006-11-21 17:00,,,,,PT_Normal,,,,,6KrK54UVQZu1Rw1TobUaZg,8JLo90LlHUO00Sw97w4Tfx,,,N,0,0,,,2007-02-01 02:42,2007-02-04 01:05,hbe4678,hbe4678,,,0
1699,12457880,14517,6816040,13331,1,100,N,N,N,CP_Units,TT_Task,DT_FixedDUR2,RV_OK,TK_Complete,EM01CPI135,01C A/G Piping Iso's - Issue IFC,,,,0,0,0,0,120,0,0,0,,2007-01-01 08:00,2007-01-29 08:00,2007-06-08 17:00,2007-06-08 17:00,,2007-01-27 00:00,2007-01-27 00:00,,,2007-01-01 08:00,2007-01-19 17:00,,,,,PT_Normal,,,,,qyJNGvXXT9OvDb5/64OzJQ,BK+AuQu/v0+zkMzWKerePh,,,N,0,0,,,2007-02-01 02:42,2007-02-04 01:05,hbe4678,hbe4678,,,0
1700,12457881,14517,6816040,13331,1,100,N,N,N,CP_Units,TT_Task,DT_FixedDUR2,RV_OK,TK_Complete,EM01CPI138,01C Design / Issue Pipe Supports IFC,,,,0,0,0,0,320,0,0,0,,2007-01-01 08:00,2007-01-26 17:00,2007-06-08 17:00,2007-06-08 17:00,,2007-01-27 00:00,2007-01-27 00:00,,,2007-01-01 08:00,2007-02-23 17:00,,,,,PT_Normal,,,,,pyf4y6/rTniHRC1NsoPSww,5uiDNF5iBkCyULSQHztV6B,,,N,0,0,,,2007-02-01 02:42,2007-02-04 01:05,hbe4678,hbe4678,,,0
1701,12457882,14517,6816040,13331,1,100,N,N,N,CP_Units,TT_Task,DT_FixedDUR2,RV_OK,TK_Complete,EM01DPI120,01D Plant Layout Model,,,,0,0,0,0,560,0,0,0,,2005-10-03 08:00,2006-02-28 17:00,2007-04-08 08:01,2007-04-08 08:01,,2007-01-27 00:00,2007-01-27 00:00,,,2005-10-03 08:00,2006-01-17 17:00,,,,,PT_Normal,,,,,lK57+z2BQuSivf2F0Pj1eg,XBx8X2w/3EyBEbTyNNrPOh,,,N,0,0,,,2007-02-01 02:42,2007-02-04 01:05,hbe4678,hbe4678,,,0
1702,12457883,14517,6816040,13331,1,100,N,N,N,CP_Units,TT_Task,DT_FixedDUR2,RV_OK,TK_Complete,EM01DPI130,01D Model Review Mtg,,,,0,0,0,0,16,0,0,0,,2006-03-02 08:00,2006-03-03 17:00,2007-04-08 08:01,2007-04-08 08:01,,2007-01-27 00:00,2007-01-27 00:00,,,2006-03-02 08:00,2006-03-03 17:00,,,,,PT_Normal,,,,,/cs7KX6sRMuev2xoHjyYhg,UEuejLZkNEKG3wvw9P3osh,,,N,0,0,,,2007-02-01 02:42,2007-02-04 01:05,hbe4678,hbe4678,,,0
1703,12457884,14517,6816040,13331,1,100,N,N,N,CP_Units,TT_Task,DT_FixedDUR2,RV_OK,TK_Complete,EM01DPI132,01D Planning Release,,,,0,0,0,0,8,0,0,0,,2006-04-04 08:00,2006-04-04 17:00,2007-04-08 08:01,2007-04-08 08:01,,2007-01-27 00:00,2007-01-27 00:00,,,2006-04-04 08:00,2006-04-04 17:00,,,,,PT_Normal,,,,,sXLmCfwqS8+WdRjAauaBzA,2CwtfLbwUkyXnntJSRyicx,,,N,0,0,,,2007-02-01 02:42,2007-02-04 01:05,hbe4678,hbe4678,,,0
1704,12457885,14517,6816040,13331,1,100,N,N,N,CP_Units,TT_Task,DT_FixedDUR2,RV_OK,TK_Complete,EM01DPI134,01D Detail Model Development,,,,0,0,0,0,240,0,0,0,,2006-06-22 08:00,2006-08-02 17:00,2007-05-16 08:01,2007-05-16 08:01,,2007-01-27 00:00,2007-01-27 00:00,,,2006-06-22 08:00,2006-08-02 17:00,,,,,PT_Normal,,,,,YIwEX2U6Q1WVtka2rX8JUA,Bg7YAqEjvUaxmNVLCGsfgR,,,N,0,0,,,2007-02-01 02:42,2007-02-04 01:05,hbe4678,hbe4678,,,0
1705,12457886,14517,6816040,13331,1,100,N,N,N,CP_Units,TT_Task,DT_FixedDUR2,RV_OK,TK_Complete,EM01DPI135,01D A/G Piping Iso's - Issue IFC,,,,0,0,0,0,80,0,0,0,,2006-09-14 00:00,2006-12-08 00:00,2007-05-16 08:01,2007-05-16 08:01,,2007-01-27 00:00,2007-01-27 00:00,,,2006-09-06 08:00,2006-09-19 17:00,,,,,PT_Normal,,,,,ihRHWQIYRFGFqtB2nLBsCQ,vN1p7UaMrEmZTEMDecb2UB,,,N,0,0,,,2007-02-01 02:42,2007-02-04 01:05,hbe4678,hbe4678,,,0
1706,12457887,14517,6816040,13331,1,100,N,N,N,CP_Units,TT_Task,DT_FixedDUR2,RV_OK,TK_Complete,EM01DPI138,01D Design / Issue Pipe Supports IFC,,,,0,0,0,0,360,0,0,0,,2006-09-14 00:00,2006-12-08 00:00,2007-08-21 08:01,2007-08-21 08:01,,2007-01-27 00:00,2007-01-27 00:00,,,2006-09-25 08:00,2006-11-28 17:00,,,,,PT_Normal,,,,,1vnY0PA2QD6mcPONaoCoQg,9AS19tKRIkyUXYrupitHNh,,,N,0,0,,,2007-02-01 02:42,2007-02-04 01:05,hbe4678,hbe4678,,,0
1707,12457888,14517,6816040,13331,1,100,N,N,N,CP_Units,TT_Task,DT_FixedDUR2,RV_OK,TK_Complete,EM01JPI120,01J Plant Layout Model,,,,0,0,0,0,240,0,0,0,,2005-10-31 08:00,2006-05-17 17:00,2007-07-02 08:00,2007-07-02 08:00,,2007-01-27 00:00,2007-01-27 00:00,,,2005-10-31 08:00,2005-12-13 17:00,,,,,PT_Normal,,,,,0GsuW4NTS0eY2Cu2ngg0fg,Ljhqh2/s0kOGZxWo6BRx7R,,,N,0,0,,,2007-02-01 02:42,2007-02-04 01:05,hbe4678,hbe4678,,,0
1708,12457889,14517,6816040,13331,1,100,N,N,N,CP_Units,TT_Task,DT_FixedDUR2,RV_OK,TK_Complete,EM01JPI130,01J Model Review Mtg,,,,0,0,0,0,8,0,0,0,,2006-06-20 00:00,2006-06-20 00:00,2007-07-09 08:00,2007-07-09 08:00,,2007-01-27 00:00,2007-01-27 00:00,,,2006-07-05 08:00,2006-07-05 17:00,,,,,PT_Normal,,,,,N9SQUHjZTuqd8s0Ho3xhkw,9PD8Am/0xUe3p0oozOd1hB,,,N,0,0,,,2007-02-01 02:42,2007-02-04 01:05,hbe4678,hbe4678,,,0
1709,12457890,14517,6816040,13331,1,100,N,N,N,CP_Units,TT_Task,DT_FixedDUR2,RV_OK,TK_Complete,EM01JPI132,01J Planning Release,,,,0,0,0,0,8,0,0,0,,2006-07-06 08:00,2006-07-21 17:00,2007-07-09 08:00,2007-07-09 08:00,,2007-01-27 00:00,2007-01-27 00:00,,,2006-07-06 08:00,2006-07-06 17:00,,,,,PT_Normal,,,,,MNhdYNn9QjGPlZiS0y1j5Q,CrCMD0yJ80OaRV9IoSoEch,,,N,0,0,,,2007-02-01 02:42,2007-02-04 01:05,hbe4678,hbe4678,,,0
1710,12457891,14517,6816040,13331,1,100,N,N,N,CP_Units,TT_Task,DT_FixedDUR2,RV_OK,TK_Complete,EM01JPI134,01J Detail Model Development,,,,0,0,0,0,80,0,0,0,,2006-07-10 00:00,2006-07-14 00:00,2007-07-09 08:00,2007-07-09 08:00,,2007-01-27 00:00,2007-01-27 00:00,,,2006-07-20 08:00,2006-08-02 17:00,,,,,PT_Normal,,,,,L7CZ430WQvu9/sTWzHWv8w,/+RjO2duhkybeqe9qEcu6R,,,N,0,0,,,2007-02-01 02:42,2007-02-04 01:05,hbe4678,hbe4678,,,0
1711,12457892,14517,6816040,13331,1,100,N,N,N,CP_Units,TT_Task,DT_FixedDUR2,RV_OK,TK_Complete,EM01JPI135,01J A/G Piping Iso's - Issue IFC,,,,0,0,0,0,40,0,0,0,,2006-08-14 00:00,2006-08-21 00:00,2009-02-13 17:00,2009-02-13 17:00,,2007-01-27 00:00,2007-01-27 00:00,,,2006-08-17 08:00,2006-08-23 17:00,,,,,PT_Normal,,,,,g95uSByHTKuYr83pBCVkNA,CRVL0e2aSUKVQMq+bz2fXR,,,N,0,0,,,2007-02-01 02:42,2007-02-04 01:05,hbe4678,hbe4678,,,0
1712,12457893,14517,6816040,13331,1,100,N,N,N,CP_Units,TT_Task,DT_FixedDUR2,RV_OK,TK_Complete,EM01JPI138,01J Design / Issue Pipe Supports IFC,,,,0,0,0,0,160,0,0,0,,2006-08-14 00:00,2006-08-21 00:00,2009-02-15 08:01,2009-02-15 08:01,,2007-01-27 00:00,2007-01-27 00:00,,,2006-08-17 08:00,2006-09-13 17:00,,,,,PT_Normal,,,,,HBrkJIKIQbmgkLEVwsYyyw,N2XxhLs0wU68lwBT2IeaQR,,,N,0,0,,,2007-02-01 02:42,2007-02-04 01:05,hbe4678,hbe4678,,,0
1713,12457894,14517,6816040,13331,1,100,N,N,N,CP_Units,TT_Task,DT_FixedDUR2,RV_OK,TK_Complete,EM01YPI120,01Y Plant Layout Model,,,,0,0,0,0,200,0,0,0,,2005-07-15 00:00,2006-01-18 00:00,2007-03-13 08:00,2007-03-13 08:00,,2007-01-27 00:00,2007-01-27 00:00,,,2005-11-18 08:00,2005-12-23 17:00,,,,,PT_Normal,,,,,mjwl2+rnThCfxighEUA3Kw,/EAGNvvB1USewhheVzHWGh,,,N,0,0,,,2007-02-01 02:42,2007-02-04 01:05,hbe4678,hbe4678,,,0
1714,12457895,14517,6816040,13331,1,100,N,N,N,CP_Units,TT_Task,DT_FixedDUR2,RV_OK,TK_Complete,EM01YPI130,01Y Model Review Mtg,,,,0,0,0,0,8,0,0,0,,2006-02-20 00:00,2006-02-21 00:00,2007-03-13 08:00,2007-03-13 08:00,,2007-01-27 00:00,2007-01-27 00:00,,,2006-02-27 08:00,2006-02-27 17:00,,,,,PT_Normal,,,,,ahwBfaDhR0+fdkWPImQKvA,9qGQE1jRMkmVSt1uJXqj8h,,,N,0,0,,,2007-02-01 02:42,2007-02-04 01:05,hbe4678,hbe4678,,,0
1715,12457896,14517,6816040,13331,1,100,N,N,N,CP_Units,TT_Task,DT_FixedDUR2,RV_OK,TK_Complete,EM01YPI132,01Y Planning Release,,,,0,0,0,0,8,0,0,0,,2006-04-04 08:00,2006-04-04 17:00,2007-03-13 08:00,2007-03-13 08:00,,2007-01-27 00:00,2007-01-27 00:00,,,2006-04-04 08:00,2006-04-04 17:00,,,,,PT_Normal,,,,,l3nTdSykQJCClCNxM7hDrg,n2TQS8+de0Gn5P2Kko3LRh,,,N,0,0,,,2007-02-01 02:42,2007-02-04 01:05,hbe4678,hbe4678,,,0
1716,12457897,14517,6816040,13331,1,100,N,N,N,CP_Units,TT_Task,DT_FixedDUR2,RV_OK,TK_Complete,EM01API120,01A Plant Layout Model,,,,0,0,0,0,240,0,0,0,,2005-11-14 08:00,2006-03-20 17:00,2007-05-07 08:00,2007-05-07 08:00,,2007-01-27 00:00,2007-01-27 00:00,,,2005-11-14 08:00,2006-01-02 17:00,,,,,PT_Normal,,,,,+lankl2KQgqg0jO/ZIfQWQ,7+HBz1zo3EmZpNQQ8Fl01R,,,N,0,0,,,2007-02-01 02:42,2007-02-04 01:05,hbe4678,hbe4678,,,0
1717,12457898,14517,6816040,13331,1,100,N,N,N,CP_Units,TT_Task,DT_FixedDUR2,RV_OK,TK_Complete,EM01API123,01A Plant Layout Nozzle Release,,,,0,0,0,0,40,0,0,0,,2005-12-05 08:00,2005-12-20 17:00,2007-05-07 08:00,2007-05-07 08:00,,2007-01-27 00:00,2007-01-27 00:00,,,2005-12-05 08:00,2005-12-09 17:00,,,,,PT_Normal,,,,,aiHrmP3aT0y6xCbptXWbFw,8Tyh3thdokyXy7bMkvXClx,,,N,0,0,,,2007-02-01 02:42,2007-02-04 01:05,hbe4678,hbe4678,,,0
1718,12457899,14517,6816040,13331,1,100,N,N,N,CP_Units,TT_Task,DT_FixedDUR2,RV_OK,TK_Complete,EM01API130,01A Model Review Mtg,,,,0,0,0,0,8,0,0,0,,2006-04-04 08:00,2006-04-17 17:00,2007-05-07 08:00,2007-05-07 08:00,,2007-01-27 00:00,2007-01-27 00:00,,,2006-04-04 08:00,2006-04-04 17:00,,,,,PT_Normal,,,,,WiYz0w1IS+it+3JVOuWolA,al/wS5M2hEm6/vmd7SfOuB,,,N,0,0,,,2007-02-01 02:42,2007-02-04 01:05,hbe4678,hbe4678,,,0
1719,12457900,14517,6816040,13331,1,100,N,N,N,CP_Units,TT_Task,DT_FixedDUR2,RV_OK,TK_Complete,EM01API132,01A Planning Release,,,,0,0,0,0,8,0,0,0,,2006-08-04 00:00,2006-08-04 00:00,2007-05-07 08:00,2007-05-07 08:00,,2007-01-27 00:00,2007-01-27 00:00,,,2006-08-08 08:00,2006-08-08 17:00,,,,,PT_Normal,,,,,MghwNUttRp65Up2c0LyUgQ,B8IqW/QbTU2lb9+Ua5SLaB,,,N,0,0,,,2007-02-01 02:42,2007-02-04 01:05,hbe4678,hbe4678,,,0
1720,12457901,14517,6816040,13331,1,100,N,N,N,CP_Units,TT_Task,DT_FixedDUR2,RV_OK,TK_Complete,EM01API134,01A Detail Model Development,,,,0,0,0,0,120,0,0,0,,2006-07-10 00:00,2006-07-26 00:00,2007-07-09 08:00,2007-07-09 08:00,,2007-01-27 00:00,2007-01-27 00:00,,,2006-08-09 08:00,2006-08-29 17:00,,,,,PT_Normal,,,,,4MZTChKLQGeBy/wpbGzcww,Idccy5fxOU285DlwKMQ0OR,,,N,0,0,,,2007-02-01 02:42,2007-02-04 01:05,hbe4678,hbe4678,,,0
1721,12457902,14517,6816040,13331,1,100,N,N,N,CP_Units,TT_Task,DT_FixedDUR2,RV_OK,TK_Complete,EM01API135,01A A/G Piping Iso's - Issue IFC,,,,0,0,0,0,40,0,0,0,,2006-08-14 00:00,2006-09-01 00:00,2007-08-27 08:01,2007-08-27 08:01,,2007-01-27 00:00,2007-01-27 00:00,,,2006-08-25 08:00,2006-08-31 17:00,,,,,PT_Normal,,,,,yUIySkg9QxykhLQkfK+3xw,W0JQaHi7TkyHEVKs5ncNIh,,,N,0,0,,,2007-02-01 02:42,2007-02-04 01:05,hbe4678,hbe4678,,,0
1722,12457903,14517,6816040,13331,1,100,N,N,N,CP_Units,TT_Task,DT_FixedDUR2,RV_OK,TK_Complete,EM01API138,01A Design / Issue Pipe Supports IFC,,,,0,0,0,0,200,0,0,0,,2006-08-14 00:00,2006-09-01 00:00,2007-12-17 08:01,2007-12-17 08:01,,2007-01-27 00:00,2007-01-27 00:00,,,2006-08-25 08:00,2006-09-28 17:00,,,,,PT_Normal,,,,,iy1wVu3PSjOIH7QOuTM5qQ,gEMBv+eFh0WunBACEdAtzh,,,N,0,0,,,2007-02-01 02:42,2007-02-04 01:05,hbe4678,hbe4678,,,0
1723,12457904,14517,6816040,13331,1,100,N,N,N,CP_Units,TT_Task,DT_FixedDUR2,RV_OK,TK_Complete,EM01BPI120,01B Plant Layout Model,,,,0,0,0,0,472,0,0,0,,2005-09-20 08:00,2006-03-03 17:00,2007-05-07 08:00,2007-05-07 08:00,,2007-01-27 00:00,2007-01-27 00:00,,,2005-09-27 08:00,2005-12-20 17:00,,,,,PT_Normal,,,,,HDIACOUzTUu5nO7RzbVFcg,rQb7hNv/AE6qqARfn1214h,,,N,0,0,,,2007-02-01 02:42,2007-02-04 01:05,hbe4678,hbe4678,,,0
1724,12457905,14517,6816040,13331,1,100,N,N,N,CP_Units,TT_Task,DT_FixedDUR2,RV_OK,TK_Complete,EM01BPI123,01B Plant Layout Nozzle Release,,,,0,0,0,0,40,0,0,0,,2005-11-18 08:00,2005-11-24 17:00,2007-06-12 08:01,2007-06-12 08:01,,2007-01-27 00:00,2007-01-27 00:00,,,2005-11-18 08:00,2005-11-24 17:00,,,,,PT_Normal,,,,,yvcy/o94RMK48u81tBaaOg,zL5179eeKEGUrwH4+Is0Gh,,,N,0,0,,,2007-02-01 02:42,2007-02-04 01:05,hbe4678,hbe4678,,,0
1725,12457906,14517,6816040,13331,1,100,N,N,N,CP_Units,TT_Task,DT_FixedDUR2,RV_OK,TK_Complete,EM01BPI130,01B Model Review Mtg,,,,0,0,0,0,16,0,0,0,,2006-02-23 00:00,2006-02-24 00:00,2007-05-07 08:00,2007-05-07 08:00,,2007-01-27 00:00,2007-01-27 00:00,,,2006-03-06 08:00,2006-03-07 17:00,,,,,PT_Normal,,,,,E4Rzn875SoOMwfAV/PIWxQ,nDZVQYTIDU+xRd7IDOozqh,,,N,0,0,,,2007-02-01 02:42,2007-02-04 01:05,hbe4678,hbe4678,,,0
1726,12457907,14517,6816040,13331,1,100,N,N,N,CP_Units,TT_Task,DT_FixedDUR2,RV_OK,TK_Complete,EM01BPI132,01B Planning Release,,,,0,0,0,0,8,0,0,0,,2006-03-17 00:00,2006-04-04 17:00,2007-05-07 08:00,2007-05-07 08:00,,2007-01-27 00:00,2007-01-27 00:00,,,2006-03-24 08:00,2006-03-24 17:00,,,,,PT_Normal,,,,,TkZ8CmuwQBO7mXMCquTlMQ,58nmqi+T00OyhFGWNPmctR,,,N,0,0,,,2007-02-01 02:42,2007-02-04 01:05,hbe4678,hbe4678,,,0
1727,12457908,14517,6816040,13331,1,100,N,N,N,CP_Units,TT_Task,DT_FixedDUR2,RV_OK,TK_Complete,EM01BPI134,01B Detail Model Development,,,,0,0,0,0,160,0,0,0,,2006-06-19 08:00,2006-07-24 17:00,2007-05-07 08:00,2007-05-07 08:00,,2007-01-27 00:00,2007-01-27 00:00,,,2006-06-19 08:00,2006-07-14 17:00,,,,,PT_Normal,,,,,TSHyI8dLSW+3EENZBszUZw,GTmYeTxKB0q3M7gLe9fwtB,,,N,0,0,,,2007-02-01 02:42,2007-02-04 01:05,hbe4678,hbe4678,,,0
1728,12457909,14517,6816043,13330,0,100,N,N,N,CP_Units,TT_FinMile,DT_FixedDUR2,RV_OK,TK_Complete,EM01DSY172,01D P&IDs & Line List Issue - IFD,,,,0,0,0,0,0,0,0,0,,2006-08-02 00:00,2006-08-02 00:00,2007-05-16 08:01,2007-05-16 08:01,,2007-01-27 00:00,2007-01-27 00:00,,,2006-08-01 08:01,2006-08-01 08:01,,,,,PT_Normal,,,,,CVQHLXn/Th6O5CkgRY+lGQ,JYwVR5DVQ02c86buwOClWB,,,N,0,0,,,2007-02-01 02:42,2007-02-04 01:05,hbe4678,hbe4678,,,0
1729,12457910,14517,6816043,13330,0,100,N,N,N,CP_Units,TT_FinMile,DT_FixedDUR2,RV_OK,TK_Complete,EM01JSY172,01J P&IDs & Line List Issue - IFD,,,,0,0,0,0,0,0,0,0,,2006-05-02 00:00,2006-05-02 00:00,2009-02-13 17:00,2009-02-13 17:00,,2007-01-27 00:00,2007-01-27 00:00,,,2006-06-27 17:00,2006-06-27 17:00,,,,,PT_Normal,,,,,kH0TZYCOT5yFvgWU+v/9nQ,3FzzgRFQ7U2W2HEI1lfYNR,,,N,0,0,,,2007-02-01 02:42,2007-02-04 01:05,hbe4678,hbe4678,,,0
1730,12457911,14517,6816043,13330,0,100,N,N,N,CP_Units,TT_FinMile,DT_FixedDUR2,RV_OK,TK_Complete,EM01YSY172,01Y P&IDs & Line List Issue - IFD,,,,0,0,0,0,0,0,0,0,,2006-05-02 00:00,2006-05-02 00:00,2007-03-13 08:00,2007-03-13 08:00,,2007-01-27 00:00,2007-01-27 00:00,,,2006-05-15 17:00,2006-05-15 17:00,,,,,PT_Normal,,,,,F35RGvkdROm0cal16tPoSQ,8MFTpMHVfEmc5bfuuIRLnh,,,N,0,0,,,2007-02-01 02:42,2007-02-04 01:05,hbe4678,hbe4678,,,0
1731,12457912,14517,6816043,13330,0,100,N,N,N,CP_Units,TT_FinMile,DT_FixedDrtn,RV_OK,TK_Complete,EM01ASY272,01A P&IDs & Line List Issue - IFC,,,,0,0,0,0,0,0,0,0,,2006-09-29 17:00,2006-09-29 17:00,2007-12-17 08:01,2007-12-17 08:01,,2007-01-27 00:00,2007-01-27 00:00,,,2006-09-29 17:00,2006-09-29 17:00,,,,,PT_Normal,,,,,EB/B88MDTd2Tx6w41Pp+jQ,ZXW8HG5y6UaKnjj/scK/yx,,,N,0,0,,,2007-02-01 02:42,2007-02-04 01:05,hbe4678,hbe4678,,,0
1732,12457913,14517,6816043,13330,0,100,N,N,N,CP_Units,TT_FinMile,DT_FixedDUR2,RV_OK,TK_Complete,EM01BSY272,01B P&IDs & Line List Issue - IFC,,,,0,0,0,0,0,0,0,0,,2006-09-29 17:00,2006-09-29 17:00,2007-08-19 08:00,2007-08-19 08:00,,2007-01-27 00:00,2007-01-27 00:00,,,2006-10-20 17:00,2006-10-20 17:00,,,,,PT_Normal,,,,,BKvePCCvSlCSbef8FesKRA,dQqJaTBMjU6DGcv1Obo8eB,,,N,0,0,,,2007-02-01 02:42,2007-02-04 01:05,hbe4678,hbe4678,,,0
1733,12457914,14517,6816043,13330,0,100,N,N,N,CP_Units,TT_FinMile,DT_FixedDUR2,RV_OK,TK_Complete,EM01CSY272,01C P&IDs & Line List Issue - IFC,,,,0,0,0,0,0,0,0,0,,2006-12-15 17:00,2006-12-15 17:00,2007-08-19 08:00,2007-08-19 08:00,,2007-01-27 00:00,2007-01-27 00:00,,,2006-12-15 17:00,2006-12-15 17:00,,,,,PT_Normal,,,,,ZEF+X5ckSCuww/u/4YZMmg,JYwVR5DVQ02c86buwOClWB,,,N,0,0,,,2007-02-01 02:42,2007-02-04 01:05,hbe4678,hbe4678,,,0
1734,12457915,14517,6816043,13330,0,100,N,N,N,CP_Units,TT_FinMile,DT_FixedDUR2,RV_OK,TK_Complete,EM01DSY272,01D P&IDs & Line List Issue - IFC,,,,0,0,0,0,0,0,0,0,,2006-12-04 00:00,2006-12-04 00:00,2007-08-21 08:01,2007-08-21 08:01,,2007-01-27 00:00,2007-01-27 00:00,,,2006-12-01 17:00,2006-12-01 17:00,,,,,PT_Normal,,,,,e+o13yrDQbCXEfycBU4Klg,qtgzN0a3LU2Xii1fM1M6AB,,,N,0,0,,,2007-02-01 02:42,2007-02-04 01:05,hbe4678,hbe4678,,,0
1735,12457916,14517,6816043,13330,0,100,N,N,N,CP_Units,TT_FinMile,DT_FixedDUR2,RV_OK,TK_Complete,EM01JSY272,01J P&IDs & Line List Issue - IFC,,,,0,0,0,0,0,0,0,0,,2006-08-03 00:00,2006-08-03 00:00,2009-02-13 17:00,2009-02-13 17:00,,2007-01-27 00:00,2007-01-27 00:00,,,2006-09-01 17:00,2006-09-01 17:00,,,,,PT_Normal,,,,,6dE7FicwRyGOKg58GPekEQ,UMbk8z+u40erVSAYJiXi5x,,,N,0,0,,,2007-02-01 02:42,2007-02-04 01:05,hbe4678,hbe4678,,,0
1736,12457917,14517,6816043,13330,0,100,N,N,N,CP_Units,TT_FinMile,DT_FixedDUR2,RV_OK,TK_Complete,EM01YSY272,01Y P&IDs & Line List Issue - IFC,,,,0,0,0,0,0,0,0,0,,2006-07-31 00:00,2006-07-31 00:00,2007-07-16 08:00,2007-07-16 08:00,,2007-01-27 00:00,2007-01-27 00:00,,,2006-08-11 17:00,2006-08-11 17:00,,,,,PT_Normal,,,,,iUf3YZwGQqGPc/mg91Kzhw,5rAw3rXoikqPAKuNvDWMrB,,,N,0,0,,,2007-02-01 02:42,2007-02-04 01:05,hbe4678,hbe4678,,,0
1737,12457918,14517,6816043,13330,0,100,N,N,N,CP_Units,TT_FinMile,DT_FixedDUR2,RV_OK,TK_Complete,EM01ASY172,01A P&IDs & Line List Issue - IFD,,,,0,0,0,0,0,0,0,0,,2006-07-26 00:00,2006-07-26 00:00,2007-12-17 08:01,2007-12-17 08:01,,2007-01-27 00:00,2007-01-27 00:00,,,2006-08-18 17:00,2006-08-18 17:00,,,,,PT_Normal,,,,,fDFUaDdfRoOSFbFtxJmjFw,S1GBe9sxSUORRby+WE0uHh,,,N,0,0,,,2007-02-01 02:42,2007-02-04 01:05,hbe4678,hbe4678,,,0
1738,12457919,14517,6816043,13330,0,100,N,N,N,CP_Units,TT_FinMile,DT_FixedDUR2,RV_OK,TK_Complete,EM01BSY172,01B P&IDs & Line List Issue - IFD,,,,0,0,0,0,0,0,0,0,,2006-07-19 00:00,2006-07-19 00:00,2007-05-07 08:00,2007-05-07 08:00,,2007-01-27 00:00,2007-01-27 00:00,,,2006-07-17 17:00,2006-07-17 17:00,,,,,PT_Normal,,,,,dEnOs+SgToCmaQukcqRA/g,lJneuVfqykahh0n2ZLmuIB,,,N,0,0,,,2007-02-01 02:42,2007-02-04 01:05,hbe4678,hbe4678,,,0
1739,12457920,14517,6816043,13330,0,100,N,N,N,CP_Units,TT_FinMile,DT_FixedDUR2,RV_OK,TK_Complete,EM01CSY172,01C P&IDs & Line List Issue - IFD,,,,0,0,0,0,0,0,0,0,,2006-10-11 00:00,2006-10-11 00:00,2007-08-19 08:00,2007-08-19 08:00,,2007-01-27 00:00,2007-01-27 00:00,,,2006-10-19 17:00,2006-10-19 17:00,,,,,PT_Normal,,,,,iU9xEq7UTaKKvsg1lXdrqQ,dQqJaTBMjU6DGcv1Obo8eB,,,N,0,0,,,2007-02-01 02:42,2007-02-04 01:05,hbe4678,hbe4678,,,0
1740,12457921,14517,6816053,13330,1,100,N,N,N,CP_Units,TT_Task,DT_FixedDUR2,RV_OK,TK_Complete,EM03BMD229,03B Vessel Steel Release IFC,,,,0,0,0,0,160,0,0,0,,2006-07-03 00:00,2006-08-04 00:00,2007-08-12 08:01,2007-08-12 08:01,,2007-01-27 00:00,2007-01-27 00:00,,,2006-09-29 08:00,2006-10-26 17:00,,,,,PT_Normal,,,,,m+0RZ5vjQsytlrgYfCwIew,w4iCls8Ud0eY+lRYAtcx8h,,,N,0,0,,,2007-02-01 02:42,2007-02-04 01:05,hbe4678,hbe4678,,,0
1741,12457922,14517,6816053,13330,1,100,N,N,N,CP_Units,TT_Task,DT_FixedDUR2,RV_OK,TK_Complete,EM03CMD229,"03C Vessel Steel Release IFC (MD411 2203-F, 2204-F)",,,,0,0,0,0,160,0,0,0,,2006-04-26 00:00,2006-05-29 00:00,2007-05-08 08:00,2007-05-08 08:00,,2007-01-27 00:00,2007-01-27 00:00,,,2006-06-05 08:00,2006-06-30 17:00,,,,,PT_Normal,,,,,BH9gD+i0SS6YGNDmpsJW2Q,GeskC8CYbkm1Fzx54rrqax,,,N,0,0,,,2007-02-01 02:42,2007-02-04 01:05,hbe4678,hbe4678,,,0
1742,12457923,14517,6816053,13330,1,100,N,N,N,CP_Units,TT_Task,DT_FixedDUR2,RV_OK,TK_Complete,EM03FMD229,"03F Vessel Steel Release IFC (MD411, 2006-F)",,,,0,0,0,0,160,0,0,0,,2006-04-26 00:00,2006-05-29 00:00,2007-08-07 08:01,2007-08-07 08:01,,2007-01-27 00:00,2007-01-27 00:00,,,2006-06-28 08:00,2006-07-25 17:00,,,,,PT_Normal,,,,,MYR6t/65SBO87RuI8/KjPg,gOr74IKUPE2uU0C82JZSkR,,,N,0,0,,,2007-02-01 02:42,2007-02-04 01:05,hbe4678,hbe4678,,,0
1743,12457924,14517,6816055,13331,1,100,N,N,N,CP_Units,TT_Task,DT_FixedDUR2,RV_OK,TK_Complete,EM03API200,03A Equipment Location Plans,,,,0,0,0,0,304,0,0,0,,2006-02-27 08:00,2006-09-08 17:00,2007-05-07 08:00,2007-05-07 08:00,,2007-01-27 00:00,2007-01-27 00:00,,,2006-02-27 08:00,2006-04-24 17:00,,,,,PT_Normal,,,,,U0UG9pX3QN+QRsYItOaLVA,ovIfOI9mo0SoRj4fEaiwag,,,N,0,0,,,2007-02-01 02:42,2007-02-04 01:05,hbe4678,hbe4678,,,0
1744,12457925,14517,6816055,13331,1,100,N,N,N,CP_Units,TT_Task,DT_FixedDUR2,RV_OK,TK_Complete,EM03BPI200,03B Equipment Location Plans,,,,0,0,0,0,80,0,0,0,,2006-02-27 08:00,2006-09-06 00:00,2007-05-07 08:00,2007-05-07 08:00,,2007-01-27 00:00,2007-01-27 00:00,,,2006-02-27 08:00,2006-03-10 17:00,,,,,PT_Normal,,,,,sMQxa2csSyuRoawVK6rWrA,2A+S8L05pkObPTJituupFw,,,N,0,0,,,2007-02-01 02:42,2007-02-04 01:05,hbe4678,hbe4678,,,0
1745,12457926,14517,6816055,13331,1,100,N,N,N,CP_Units,TT_Task,DT_FixedDUR2,RV_OK,TK_Complete,EM03CPI200,03C Equipment Location Plans,,,,0,0,0,0,192,0,0,0,,2006-02-27 08:00,2006-04-07 17:00,2007-05-07 08:00,2007-05-07 08:00,,2007-01-27 00:00,2007-01-27 00:00,,,2006-02-27 08:00,2006-03-31 17:00,,,,,PT_Normal,,,,,lH7hsv3gQx+pLZWySOV/xw,yMu2W9Cxm0C0KBxKeaiwNg,,,N,0,0,,,2007-02-01 02:42,2007-02-04 01:05,hbe4678,hbe4678,,,0
1746,12457927,14517,6816055,13331,1,100,N,N,N,CP_Units,TT_Task,DT_FixedDUR2,RV_OK,TK_Complete,EM03DPI200,03D Equipment Location Plans,,,,0,0,0,0,152,0,0,0,,2006-02-27 08:00,2006-04-07 17:00,2007-05-07 08:00,2007-05-07 08:00,,2007-01-27 00:00,2007-01-27 00:00,,,2006-02-27 08:00,2006-03-24 17:00,,,,,PT_Normal,,,,,BMZzbPPyTF6Lqa9sfO88aA,5i4ypnKfSkm1wr+7fBrLtw,,,N,0,0,,,2007-02-01 02:42,2007-02-04 01:05,hbe4678,hbe4678,,,0
1747,12457928,14517,6816055,13331,1,100,N,N,N,CP_Units,TT_Task,DT_FixedDUR2,RV_OK,TK_Complete,EM03EPI200,03E Equipment Location Plans,,,,0,0,0,0,456,0,0,0,,2006-02-27 08:00,2006-10-06 00:00,2007-05-07 08:00,2007-05-07 08:00,,2007-01-27 00:00,2007-01-27 00:00,,,2006-02-27 08:00,2006-05-22 17:00,,,,,PT_Normal,,,,,9Rb+qBwdR5CsoFL9NYjkjA,WOK06dNopUGnH4Y7ZkMhew,,,N,0,0,,,2007-02-01 02:42,2007-02-04 01:05,hbe4678,hbe4678,,,0
1748,12457929,14517,6816055,13331,1,100,N,N,N,CP_Units,TT_Task,DT_FixedDUR2,RV_OK,TK_Complete,EM03FPI200,03F Equipment Location Plans,,,,0,0,0,0,40,0,0,0,,2006-07-17 00:00,2006-07-25 00:00,2007-05-07 08:00,2007-05-07 08:00,,2007-01-27 00:00,2007-01-27 00:00,,,2006-07-31 08:00,2006-08-04 17:00,,,,,PT_Normal,,,,,gD3xIvEtSxWu6Dlw1VCbWA,Mrfe1y02Kk+6/+z2lqQiCg,,,N,0,0,,,2007-02-01 02:42,2007-02-04 01:05,hbe4678,hbe4678,,,0
1749,12457930,14517,6816055,13331,1,100,N,N,N,CP_Drtn,TT_Task,DT_FixedDUR2,RV_OK,TK_Complete,EM05API140,05A Model Review Comment Resolution,,,,0,0,0,0,40,0,0,0,,2006-06-26 08:00,2006-08-21 17:00,2007-01-09 08:01,2007-01-09 08:01,,2007-01-27 00:00,2007-01-27 00:00,,,2006-06-26 08:00,2006-06-30 17:00,,,,,PT_Normal,,,,,P4X7VpJOTCGyESnynbsMCg,7/V/UaEaTEuH4rEAL6Icrg,,,N,0,0,,,2007-02-01 02:42,2007-02-04 01:05,hbe4678,hbe4678,,,0
1750,12457931,14517,6816055,13330,1,100,N,N,N,CP_Drtn,TT_Task,DT_FixedDUR2,RV_OK,TK_Complete,EM03DPI021,03D Model Review Comment Resolution,,,,0,0,0,0,24,0,0,0,,2006-03-13 08:00,2006-03-15 17:00,2007-05-21 08:01,2007-05-21 08:01,,2007-01-27 00:00,2007-01-27 00:00,,,2006-03-13 08:00,2006-03-15 17:00,,,,,PT_Normal,,,,,RY+HgeZMS+6WSEKl6V/e/Q,,,,N,0,0,,,2007-02-01 02:42,2007-02-04 01:05,hbe4678,hbe4678,,,0
1751,12457932,14517,6816055,13331,1,100,N,N,N,CP_Units,TT_Task,DT_FixedDUR2,RV_OK,TK_Complete,EM03FPI141,03F Model Review Comment Resolution,,,,0,0,0,0,24,0,0,0,,2006-06-15 00:00,2006-07-20 00:00,2007-05-07 08:00,2007-05-07 08:00,,2007-01-27 00:00,2007-01-27 00:00,,,2006-06-12 08:00,2006-06-14 17:00,,,,,PT_Normal,,,,,m2dgswo6SsSoNnLyhxvt8w,9qGQE1jRMkmVSt1uJXqj8h,,,N,0,0,,,2007-02-01 02:42,2007-02-04 01:05,hbe4678,hbe4678,,,0
1752,12457933,14517,6816055,13331,1,100,N,N,N,CP_Units,TT_Task,DT_FixedDUR2,RV_OK,TK_Complete,EM03FPI142,03F Detail OP's & Service Model Review Mtg,,,,0,0,0,0,16,0,0,0,,2006-07-18 00:00,2006-07-19 00:00,2007-05-10 08:01,2007-05-10 08:01,,2007-01-27 00:00,2007-01-27 00:00,,,2006-08-21 08:00,2006-08-22 17:00,,,,,PT_Normal,,,,,CnevncnJTfyzN9IOXJ0pXw,FD0y3Js8cUe7g8aCArULMQ,,,N,0,0,,,2007-02-01 02:42,2007-02-04 01:05,hbe4678,hbe4678,,,0
1753,12457934,14517,6816055,13331,1,100,N,N,N,CP_Units,TT_Task,DT_FixedDUR2,RV_OK,TK_Complete,EM03FPI143,03F OP's & Serv. Model Review Comment Resolution,,,,0,0,0,0,32,0,0,0,,2006-08-15 00:00,2006-08-21 00:00,2007-05-10 08:01,2007-05-10 08:01,,2007-01-27 00:00,2007-01-27 00:00,,,2006-08-23 08:00,2006-08-28 17:00,,,,,PT_Normal,,,,,uBOLbENVTKmBUC7fA7EiRA,FD0y3Js8cUe7g8aCArULMQ,,,N,0,0,,,2007-02-01 02:42,2007-02-04 01:05,hbe4678,hbe4678,,,0
1754,12457935,14517,6816055,13331,1,100,N,N,N,CP_Units,TT_Task,DT_FixedDUR2,RV_OK,TK_Complete,EM03EPI141,03E Model Review Comment Resolution,,,,0,0,0,0,24,0,0,0,,2006-07-03 08:00,2006-07-14 00:00,2007-04-04 08:01,2007-04-04 08:01,,2007-01-27 00:00,2007-01-27 00:00,,,2006-07-03 08:00,2006-07-05 17:00,,,,,PT_Normal,,,,,R1BzBD07Tw+auebtULLnSw,cjrBmV7eJUOObv9d73B1ah,,,N,0,0,,,2007-02-01 02:42,2007-02-04 01:05,hbe4678,hbe4678,,,0
1755,12457936,14517,6816055,13331,1,100,N,N,N,CP_Units,TT_Task,DT_FixedDUR2,RV_OK,TK_Complete,EM03EPI142,03E Detail OP's & Service Model Review Mtg,,,,0,0,0,0,16,0,0,0,2006-09-18 08:00,2006-09-18 08:00,2006-09-21 17:00,2007-04-04 08:01,2007-04-04 08:01,,2007-01-27 00:00,2007-01-27 00:00,,,2006-09-18 08:00,2006-09-19 17:00,,,,CS_MSOA,PT_Normal,,,,,jLGQ5xk5R2KFLNxKsmENnw,cjrBmV7eJUOObv9d73B1ah,,,N,0,0,,,2007-02-01 02:42,2007-02-04 01:05,hbe4678,hbe4678,,,0
1756,12457937,14517,6816055,13331,1,100,N,N,N,CP_Units,TT_Task,DT_FixedDUR2,RV_OK,TK_Complete,EM03EPI143,03E OP's & Serv. Model Review Comment Resolution,,,,0,0,0,0,16,0,0,0,,2006-09-25 08:00,2006-12-20 17:00,2007-04-04 08:01,2007-04-04 08:01,,2007-01-27 00:00,2007-01-27 00:00,,,2006-09-25 08:00,2006-09-26 17:00,,,,,PT_Normal,,,,,WYtpQE/5SNCko+OL/p1Kiw,2q7Rg2SQzUSQHlI874R3Dg,,,N,0,0,,,2007-02-01 02:42,2007-02-04 01:05,hbe4678,hbe4678,,,0
1757,12457938,14517,6816055,13331,1,100,N,N,N,CP_Units,TT_Task,DT_FixedDUR2,RV_OK,TK_Complete,EM03DPI141,03D Detail OP's & Services Model Review Mtg,,,,0,0,0,0,8,0,0,0,,2006-07-19 08:00,2006-07-20 00:00,2007-08-21 08:01,2007-08-21 08:01,,2007-01-27 00:00,2007-01-27 00:00,,,2006-07-19 08:00,2006-07-19 17:00,,,,,PT_Normal,,,,,ObBzQChXTuCBj1QOcMQwbA,vDJaapSVPkm121jn53zu+g,,,N,0,0,,,2007-02-01 02:42,2007-02-04 01:05,hbe4678,hbe4678,,,0
1758,12457939,14517,6816055,13331,1,100,N,N,N,CP_Units,TT_Task,DT_FixedDUR2,RV_OK,TK_Complete,EM03DPI143,03D OP's & Serv. Model Review Comments Resolution,,,,0,0,0,0,40,0,0,0,,2006-07-21 00:00,2006-08-17 00:00,2007-08-21 08:01,2007-08-21 08:01,,2007-01-27 00:00,2007-01-27 00:00,,,2006-07-24 08:00,2006-07-28 17:00,,,,,PT_Normal,,,,,VsyzdVjyR2eUNlRuy7QNTg,LS+0ct5Se0qj+iAJgl/6zA,,,N,0,0,,,2007-02-01 02:42,2007-02-04 01:05,hbe4678,hbe4678,,,0
1759,12457940,14517,6816055,13331,1,100,N,N,N,CP_Units,TT_Task,DT_FixedDUR2,RV_OK,TK_Complete,EM03YPI141,03Y Detail OP's & Services Model Review Mtg,,,,0,0,0,0,40,0,0,0,,2006-08-24 00:00,2006-08-30 00:00,2007-03-13 08:00,2007-03-13 08:00,,2007-01-27 00:00,2007-01-27 00:00,,,2006-09-01 08:00,2006-09-07 17:00,,,,,PT_Normal,,,,,7zdpsZ/RR86tk6PoYwGaTg,tt6ci06Oc0Ki7z7Jn1VECQ,,,N,0,0,,,2007-02-01 02:42,2007-02-04 01:05,hbe4678,hbe4678,,,0
1760,12457941,14517,6816055,13331,1,100,N,N,N,CP_Units,TT_Task,DT_FixedDUR2,RV_OK,TK_Complete,EM03YPI143,03Y OP's & Serv. Model Review Comments Resolution,,,,0,0,0,0,40,0,0,0,,2006-09-04 08:00,2006-09-11 08:00,2007-03-13 08:00,2007-03-13 08:00,,2007-01-27 00:00,2007-01-27 00:00,,,2006-09-04 08:00,2006-09-08 17:00,,,,,PT_Normal,,,,,Ee3JqkzsSISn0FlA+427Gg,6lgd4w4RgEKe/FNmS09TxQ,,,N,0,0,,,2007-02-01 02:42,2007-02-04 01:05,hbe4678,hbe4678,,,0
1761,12457942,14517,6816055,13331,1,100,N,N,N,CP_Units,TT_Task,DT_FixedDUR2,RV_OK,TK_Complete,EM03BPI140,03B Model Review Comment Resolution,,,,0,0,0,0,24,0,0,0,,2006-06-02 00:00,2006-06-06 00:00,2007-05-07 08:00,2007-05-07 08:00,,2007-01-27 00:00,2007-01-27 00:00,,,2006-06-13 08:00,2006-06-15 17:00,,,,,PT_Normal,,,,,rdwt5kl0QDeH/jrfiAfkyw,hw53TRnF90WzzIOUsn7QVR,,,N,0,0,,,2007-02-01 02:42,2007-02-04 01:05,hbe4678,hbe4678,,,0
1762,12457943,14517,6816055,13331,1,100,N,N,N,CP_Units,TT_Task,DT_FixedDUR2,RV_OK,TK_Complete,EM03BPI141,03B Detail OP's & Services Model Review Mtg,,,,0,0,0,0,16,0,0,0,,2006-08-30 08:00,2006-08-30 17:00,2007-08-12 08:01,2007-08-12 08:01,,2007-01-27 00:00,2007-01-27 00:00,,,2006-08-30 08:00,2006-08-31 17:00,,,,,PT_Normal,,,,,a6KdJ7MASwKw5MIUIgdfbw,hw53TRnF90WzzIOUsn7QVR,,,N,0,0,,,2007-02-01 02:42,2007-02-04 01:05,hbe4678,hbe4678,,,0
1763,12457944,14517,6816055,13331,1,100,N,N,N,CP_Units,TT_Task,DT_FixedDUR2,RV_OK,TK_Complete,EM03BPI142,03B OP's & Serv. Model Review Comment Resolution,,,,0,0,0,0,16,0,0,0,,2006-09-04 08:00,2006-09-06 17:00,2007-08-12 08:01,2007-08-12 08:01,,2007-01-27 00:00,2007-01-27 00:00,,,2006-09-04 08:00,2006-09-05 17:00,,,,,PT_Normal,,,,,hCEQcud1QvWMa+gQjpJ3ug,hw53TRnF90WzzIOUsn7QVR,,,N,0,0,,,2007-02-01 02:42,2007-02-04 01:05,hbe4678,hbe4678,,,0
1764,12457945,14517,6816055,13331,1,100,N,N,N,CP_Units,TT_Task,DT_FixedDUR2,RV_OK,TK_Complete,EM03API140,03A Model Review Comment Resolution,,,,0,0,0,0,40,0,0,0,,2006-05-31 08:00,2006-06-08 00:00,2007-04-02 08:00,2007-04-02 08:00,,2007-01-27 00:00,2007-01-27 00:00,,,2006-05-31 08:00,2006-06-06 17:00,,,,,PT_Normal,,,,,XzrxERTsRY6j3YBFI0oHJA,UV5EraYv5EOub1ONYN2iOR,,,N,0,0,,,2007-02-01 02:42,2007-02-04 01:05,hbe4678,hbe4678,,,0
1765,12457946,14517,6816055,13331,1,100,N,N,N,CP_Units,TT_Task,DT_FixedDUR2,RV_OK,TK_Complete,EM03API141,03A Detail OP's & Services Model Review Mtg,,,,0,0,0,0,16,0,0,0,,2006-09-11 00:00,2006-09-13 17:00,2007-04-02 08:00,2007-04-02 08:00,,2007-01-27 00:00,2007-01-27 00:00,,,2006-09-04 08:00,2006-09-05 17:00,,,,,PT_Normal,,,,,HrmWY64yRQSTkmHwXaYvjw,UV5EraYv5EOub1ONYN2iOR,,,N,0,0,,,2007-02-01 02:42,2007-02-04 01:05,hbe4678,hbe4678,,,0
1766,12457947,14517,6816055,13331,1,100,N,N,N,CP_Units,TT_Task,DT_FixedDUR2,RV_OK,TK_Complete,EM03API142,03A OP's & Serv. Model Review Comment Resolution,,,,0,0,0,0,16,0,0,0,,2006-09-14 08:00,2006-09-15 17:00,2007-04-02 08:00,2007-04-02 08:00,,2007-01-27 00:00,2007-01-27 00:00,,,2006-09-14 08:00,2006-09-15 17:00,,,,,PT_Normal,,,,,tRDr02nbTI6l00AtmXBJWA,UV5EraYv5EOub1ONYN2iOR,,,N,0,0,,,2007-02-01 02:42,2007-02-04 01:05,hbe4678,hbe4678,,,0
1767,12457948,14517,6816055,13331,1,100,N,N,N,CP_Units,TT_Task,DT_FixedDUR2,RV_OK,TK_Complete,EM03CPI140,03C Model Review Comment Resolution,,,,0,0,0,0,24,0,0,0,,2006-03-13 08:00,2006-03-30 17:00,2007-05-08 08:00,2007-05-08 08:00,,2007-01-27 00:00,2007-01-27 00:00,,,2006-03-13 08:00,2006-03-15 17:00,,,,,PT_Normal,,,,,/BnvvlfqR+2ajLIjHE7d7w,+HgImJhDi0m/faehL9wWHx,,,N,0,0,,,2007-02-01 02:42,2007-02-04 01:05,hbe4678,hbe4678,,,0
1768,12457949,14517,6816055,13331,1,100,N,N,N,CP_Units,TT_Task,DT_FixedDUR2,RV_OK,TK_Complete,EM03CPI141,03C Detail OP's & Services Model Review Mtg,,,,0,0,0,0,16,0,0,0,,2006-05-24 08:00,2006-05-25 17:00,2007-05-08 08:00,2007-05-08 08:00,,2007-01-27 00:00,2007-01-27 00:00,,,2006-05-24 08:00,2006-05-25 17:00,,,,,PT_Normal,,,,,VmGerkVcRV+iWiF53AD1eA,+HgImJhDi0m/faehL9wWHx,,,N,0,0,,,2007-02-01 02:42,2007-02-04 01:05,hbe4678,hbe4678,,,0
1769,12457950,14517,6816055,13331,1,100,N,N,N,CP_Units,TT_Task,DT_FixedDUR2,RV_OK,TK_Complete,EM03CPI142,03C OP's & Serv. Model Review Comment Resolution,,,,0,0,0,0,16,0,0,0,,2006-05-26 08:00,2006-06-13 17:00,2007-05-08 08:00,2007-05-08 08:00,,2007-01-27 00:00,2007-01-27 00:00,,,2006-05-26 08:00,2006-05-29 17:00,,,,,PT_Normal,,,,,+ne5wlx9R0C6A9fZYgcrDA,+HgImJhDi0m/faehL9wWHx,,,N,0,0,,,2007-02-01 02:42,2007-02-04 01:05,hbe4678,hbe4678,,,0
1770,12457951,14517,6816055,13331,1,100,N,N,N,CP_Units,TT_Task,DT_FixedDUR2,RV_OK,TK_Complete,EM03UPICSC,03U Model Review Mtg (HOC/MEC) - Caustic Sewer,,,,0,0,0,0,40,0,0,0,,2005-11-28 00:00,2005-12-02 17:00,2007-03-13 08:00,2007-03-13 08:00,,2007-01-27 00:00,2007-01-27 00:00,,,2005-11-14 08:00,2005-11-18 17:00,,,,,PT_Normal,,,,,cPXTS/A7TxW+V/Kr15gTHA,8/JKxuFIz0e3X29ydt3fwR,,,N,0,0,,,2007-02-01 02:42,2007-02-04 01:05,hbe4678,hbe4678,,,0
1771,12457952,14517,6816055,13331,1,100,N,N,N,CP_Units,TT_Task,DT_FixedDUR2,RV_OK,TK_Complete,EM03UPICSD,03U Planning Release - Caustic Sewer,,,,0,0,0,0,40,0,0,0,,2005-12-19 08:00,2006-01-23 00:00,2007-03-13 08:00,2007-03-13 08:00,,2007-01-27 00:00,2007-01-27 00:00,,,2005-12-19 08:00,2005-12-23 17:00,,,,,PT_Normal,,,,,3/W2KagtTlCksCp2RrIoYA,8B/vWfkuL0aO3cHJuwOW9x,,,N,0,0,,,2007-02-01 02:42,2007-02-04 01:05,hbe4678,hbe4678,,,0
1772,12457953,14517,6816055,13331,1,100,N,N,N,CP_Units,TT_Task,DT_FixedDUR2,RV_OK,TK_Complete,EM03BPI133,03B IDP - Plant Layout,,,,0,0,0,0,16,0,0,0,,2006-06-07 00:00,2006-06-09 00:00,2007-05-07 08:00,2007-05-07 08:00,,2007-01-27 00:00,2007-01-27 00:00,,,2006-06-16 08:00,2006-06-19 17:00,,,,,PT_Normal,,,,,dArMHimjRom+qDLTnXKh/w,Vy9PRS4040qo8tl+JrOWRx,,,N,0,0,,,2007-02-01 02:42,2007-02-04 01:05,hbe4678,hbe4678,,,0
1773,12457954,14517,6816055,13331,1,100,N,N,N,CP_Units,TT_Task,DT_FixedDUR2,RV_OK,TK_Complete,EM03BPI136,03B IDP - Detail Design,,,,0,0,0,0,40,0,0,0,,2006-09-01 08:00,2006-09-07 17:00,2007-08-12 08:01,2007-08-12 08:01,,2007-01-27 00:00,2007-01-27 00:00,,,2006-09-01 08:00,2006-09-07 17:00,,,,,PT_Normal,,,,,InNajMhoRS+SXd64mLIXxg,vI0Qzy/7602Yp6TMv55KjB,,,N,0,0,,,2007-02-01 02:42,2007-02-04 01:05,hbe4678,hbe4678,,,0
1774,12457955,14517,6816055,13331,1,100,N,N,N,CP_Units,TT_Task,DT_FixedDUR2,RV_OK,TK_Complete,EM03CPI133,03C IDP - Plant Layout,,,,0,0,0,0,16,0,0,0,,2006-03-31 08:00,2006-04-03 17:00,2007-05-08 08:00,2007-05-08 08:00,,2007-01-27 00:00,2007-01-27 00:00,,,2006-03-31 08:00,2006-04-03 17:00,,,,,PT_Normal,,,,,UPeFrLh+RTGsu/cJNczgpw,Vy9PRS4040qo8tl+JrOWRx,,,N,0,0,,,2007-02-01 02:42,2007-02-04 01:05,hbe4678,hbe4678,,,0
1775,12457956,14517,6816055,13331,1,100,N,N,N,CP_Units,TT_Task,DT_FixedDUR2,RV_OK,TK_Complete,EM03CPI136,03C IDP - Detail Design,,,,0,0,0,0,40,0,0,0,,2006-06-12 08:00,2006-06-14 00:00,2007-05-08 08:00,2007-05-08 08:00,,2007-01-27 00:00,2007-01-27 00:00,,,2006-06-12 08:00,2006-06-16 17:00,,,,,PT_Normal,,,,,Yr5aGcQJQBOnOMjV1JBFeg,vI0Qzy/7602Yp6TMv55KjB,,,N,0,0,,,2007-02-01 02:42,2007-02-04 01:05,hbe4678,hbe4678,,,0
1776,12457957,14517,6816055,13331,1,100,N,N,N,CP_Units,TT_Task,DT_FixedDUR2,RV_OK,TK_Complete,EM03DPI133,03D IDP - Plant Layout,,,,0,0,0,0,16,0,0,0,,2006-03-16 08:00,2006-03-17 17:00,2007-05-21 08:01,2007-05-21 08:01,,2007-01-27 00:00,2007-01-27 00:00,,,2006-03-16 08:00,2006-03-17 17:00,,,,,PT_Normal,,,,,mD1iCipmReW6WiTbsw2vBQ,Vy9PRS4040qo8tl+JrOWRx,,,N,0,0,,,2007-02-01 02:42,2007-02-04 01:05,hbe4678,hbe4678,,,0
1777,12457958,14517,6816055,13331,1,100,N,N,N,CP_Units,TT_Task,DT_FixedDUR2,RV_OK,TK_Complete,EM03DPI136,03D IDP - Detail Design,,,,0,0,0,0,16,0,0,0,,2006-08-18 00:00,2006-08-18 00:00,2007-08-21 08:01,2007-08-21 08:01,,2007-01-27 00:00,2007-01-27 00:00,,,2006-08-22 08:00,2006-08-23 17:00,,,,,PT_Normal,,,,,R4Fx89XOS5WJ8djgS8lEcA,vI0Qzy/7602Yp6TMv55KjB,,,N,0,0,,,2007-02-01 02:42,2007-02-04 01:05,hbe4678,hbe4678,,,0
1778,12457959,14517,6816055,13331,1,100,N,N,N,CP_Units,TT_Task,DT_FixedDUR2,RV_OK,TK_Complete,EM03EPI133,03E IDP - Plant Layout,,,,0,0,0,0,16,0,0,0,,2006-07-17 08:00,2006-07-21 00:00,2007-04-04 08:01,2007-04-04 08:01,,2007-01-27 00:00,2007-01-27 00:00,,,2006-07-17 08:00,2006-07-18 17:00,,,,,PT_Normal,,,,,/7oLGacQS9+H9cKf9oKPig,Vy9PRS4040qo8tl+JrOWRx,,,N,0,0,,,2007-02-01 02:42,2007-02-04 01:05,hbe4678,hbe4678,,,0
1779,12457960,14517,6816055,13331,1,100,N,N,N,CP_Units,TT_Task,DT_FixedDUR2,RV_OK,TK_Complete,EM03EPI136,03E IDP - Detail Design,,,,0,0,0,0,40,0,0,0,,2006-10-06 08:00,2006-12-20 17:00,2007-04-04 08:01,2007-04-04 08:01,,2007-01-27 00:00,2007-01-27 00:00,,,2006-10-06 08:00,2006-10-12 17:00,,,,,PT_Normal,,,,,kySpIQ4oRyS3wK4WyVi96g,vI0Qzy/7602Yp6TMv55KjB,,,N,0,0,,,2007-02-01 02:42,2007-02-04 01:05,hbe4678,hbe4678,,,0
1780,12457961,14517,6816055,13331,1,100,N,N,N,CP_Units,TT_Task,DT_FixedDUR2,RV_OK,TK_Complete,EM03FPI133,03F IDP - Plant Layout,,,,0,0,0,0,16,0,0,0,,2006-07-24 08:00,2006-07-28 17:00,2007-05-07 08:00,2007-05-07 08:00,,2007-01-27 00:00,2007-01-27 00:00,,,2006-07-24 08:00,2006-07-25 17:00,,,,,PT_Normal,,,,,TiMqDdnWQ7S708+tf4xwDQ,Vy9PRS4040qo8tl+JrOWRx,,,N,0,0,,,2007-02-01 02:42,2007-02-04 01:05,hbe4678,hbe4678,,,0
1781,12457962,14517,6816055,13331,1,100,N,N,N,CP_Units,TT_Task,DT_FixedDUR2,RV_OK,TK_Complete,EM03FPI136,03F IDP - Detail Design,,,,0,0,0,0,40,0,0,0,,2006-08-22 00:00,2006-09-25 17:00,2007-05-10 08:01,2007-05-10 08:01,,2007-01-27 00:00,2007-01-27 00:00,,,2006-08-29 08:00,2006-09-04 17:00,,,,,PT_Normal,,,,,vtdmazXLTlqMrm7iQ0a/9g,vI0Qzy/7602Yp6TMv55KjB,,,N,0,0,,,2007-02-01 02:42,2007-02-04 01:05,hbe4678,hbe4678,,,0
1782,12457963,14517,6816055,13331,1,100,N,N,N,CP_Units,TT_Task,DT_FixedDUR2,RV_OK,TK_Complete,EM03YPI133,03Y IDP - Plant Layout,,,,0,0,0,0,96,0,0,0,,2006-07-17 08:00,2006-07-21 00:00,2007-03-13 08:00,2007-03-13 08:00,,2007-01-27 00:00,2007-01-27 00:00,,,2006-07-17 08:00,2006-08-01 17:00,,,,,PT_Normal,,,,,9x6er6zISca34deGqNosAQ,Vy9PRS4040qo8tl+JrOWRx,,,N,0,0,,,2007-02-01 02:42,2007-02-04 01:05,hbe4678,hbe4678,,,0
1783,12457964,14517,6816055,13331,1,100,N,N,N,CP_Units,TT_Task,DT_FixedDUR2,RV_OK,TK_Complete,EM03YPI136,03Y IDP - Detail Design,,,,0,0,0,0,16,0,0,0,,2006-09-11 08:00,2006-09-25 17:00,2007-03-13 08:00,2007-03-13 08:00,,2007-01-27 00:00,2007-01-27 00:00,,,2006-09-11 08:00,2006-09-12 17:00,,,,,PT_Normal,,,,,MbmIebKGTZuDMCU9uzEnrQ,vI0Qzy/7602Yp6TMv55KjB,,,N,0,0,,,2007-02-01 02:42,2007-02-04 01:05,hbe4678,hbe4678,,,0
1784,12457965,14517,6816055,13331,1,100,N,N,N,CP_Units,TT_Task,DT_FixedDUR2,RV_OK,TK_Complete,EM03API133,03A IDP - Plant Layout,,,,0,0,0,0,24,0,0,0,,2006-06-02 00:00,2006-06-02 00:00,2007-04-02 08:00,2007-04-02 08:00,,2007-01-27 00:00,2007-01-27 00:00,,,2006-06-12 08:00,2006-06-14 17:00,,,,,PT_Normal,,,,,OKnykcd6Re29jq19Pj19VQ,xyAwAYXIskWVMUaBb6SnjB,,,N,0,0,,,2007-02-01 02:42,2007-02-04 01:05,hbe4678,hbe4678,,,0
1785,12457966,14517,6816055,13331,1,100,N,N,N,CP_Units,TT_Task,DT_FixedDUR2,RV_OK,TK_Complete,EM03API136,03A IDP - Detail Design,,,,0,0,0,0,32,0,0,0,,2006-09-11 08:00,2006-09-12 00:00,2007-04-02 08:00,2007-04-02 08:00,,2007-01-27 00:00,2007-01-27 00:00,,,2006-09-11 08:00,2006-09-14 17:00,,,,,PT_Normal,,,,,yYpbDpYcS6O/k4LO+0QtAA,uVMNvZXLOUWLFPKiIdW+/h,,,N,0,0,,,2007-02-01 02:42,2007-02-04 01:05,hbe4678,hbe4678,,,0
1786,12457967,14517,6816055,13331,1,100,N,N,N,CP_Units,TT_Task,DT_FixedDUR2,RV_OK,TK_Complete,EM03UPI190,03U U/G Plan Dwgs Issue IFC,,,,0,0,0,0,40,0,0,0,,2006-05-22 08:00,2006-05-30 17:00,2007-06-17 08:00,2007-06-17 08:00,,2007-01-27 00:00,2007-01-27 00:00,,,2006-05-22 08:00,2006-05-26 17:00,,,,,PT_Normal,,,,,LVhDz1ySQuePsHfshHY4rA,gbjwML+riUG0wcaHP/6txh,,,N,0,0,,,2007-02-01 02:42,2007-02-04 01:05,hbe4678,hbe4678,,,0
1787,12457968,14517,6816055,13331,1,0,N,N,N,CP_Units,TT_Task,DT_FixedDUR2,RV_OK,TK_NotStart,EM05BPI142,05B Detail OP's & Services Model Review Mtg,,600,0,8,0,0,0,8,0,0,0,,,,2007-06-18 08:00,2007-06-18 17:00,,2007-03-05 08:00,2007-03-05 17:00,2007-03-05 08:00,2007-03-05 17:00,2007-03-05 08:00,2007-03-05 17:00,,2007-06-18 08:00,2007-06-18 17:00,,PT_Normal,,,,,fd3JsWc6S9Sx+gyj+Vgwrg,tt6ci06Oc0Ki7z7Jn1VECQ,,,N,0,0,,,2007-02-01 02:42,2007-02-01 02:43,hbe4678,hbe4678,2007-03-05 08:00,2007-03-05 17:00,8
1788,12457969,14517,6816055,13331,1,0,N,N,N,CP_Units,TT_Task,DT_FixedDUR2,RV_OK,TK_NotStart,EM05BPI143,05B OP's & Serv. Model Review Comments Resolution,,600,0,24,0,0,0,24,0,0,0,,,,2007-06-19 08:00,2007-06-21 17:00,,2007-03-06 08:00,2007-03-08 17:00,2007-03-06 08:00,2007-03-08 17:00,2007-03-06 08:00,2007-03-08 17:00,,2007-06-19 08:00,2007-06-21 17:00,,PT_Normal,,,,,3dln5MZyRFW5BvQb4+sMVQ,6lgd4w4RgEKe/FNmS09TxQ,,,N,0,0,,,2007-02-01 02:42,2007-02-01 02:43,hbe4678,hbe4678,2007-03-06 08:00,2007-03-08 17:00,24
1789,12457970,14517,6816055,13331,1,0,N,N,N,CP_Drtn,TT_Task,DT_FixedDUR2,RV_OK,TK_Active,EM05BPI141,05B Model Review Comment Resolution,,600,0,80,0,0,0,24,0,0,0,,2006-12-04 08:00,,2007-05-14 08:00,2007-05-25 17:00,2007-02-09 17:00,2007-01-29 08:00,2007-02-09 17:00,2007-01-29 08:00,2007-02-09 17:00,2006-12-04 08:00,2006-12-06 17:00,,2007-05-14 08:00,2007-05-25 17:00,,PT_Normal,,,,,yJ27y+mZS8CBcwHjyorQoQ,X7ekXKHrx0iERwAD4azQfA,,,N,0,0,,,2007-02-01 02:42,2007-02-01 02:43,hbe4678,hbe4678,2007-01-29 08:00,2007-02-09 17:00,80
1790,12457971,14517,6816055,13331,1,100,N,N,N,CP_Units,TT_Task,DT_FixedDUR2,RV_OK,TK_Complete,EM05API142,05A Detail OP's & Services Model Review Mtg,,,,0,0,0,0,40,0,0,0,,2006-09-13 08:00,2006-09-14 17:00,2007-03-05 08:00,2007-03-05 08:00,,2007-01-27 00:00,2007-01-27 00:00,,,2006-09-13 08:00,2006-09-19 17:00,,,,,PT_Normal,,,,,myiNf6YfSyGggEX9UI63nA,1FjxP1BKiUixy1kSLYi0Xg,,,N,0,0,,,2007-02-01 02:42,2007-02-04 01:05,hbe4678,hbe4678,,,0
1791,12457972,14517,6816055,13331,1,100,N,N,N,CP_Units,TT_Task,DT_FixedDUR2,RV_OK,TK_Complete,EM05API143,05A OP's & Serv. Model Review Comments Resolution,,,,0,0,0,0,40,0,0,0,,2006-09-15 08:00,2006-10-05 17:00,2007-03-05 08:00,2007-03-05 08:00,,2007-01-27 00:00,2007-01-27 00:00,,,2006-09-15 08:00,2006-09-21 17:00,,,,,PT_Normal,,,,,qWLHl3AzT++dpWTaoHHY4A,U82bFF8oEkeRuVQGDrY0iQ,,,N,0,0,,,2007-02-01 02:42,2007-02-04 01:05,hbe4678,hbe4678,,,0
1792,12457973,14517,6816055,13331,1,100,N,N,N,CP_Units,TT_Task,DT_FixedDUR2,RV_OK,TK_Complete,EM03YPI130,03Y Model Review Mtg,,,,0,0,0,0,16,0,0,0,,2006-06-09 08:00,2006-06-13 00:00,2007-03-13 08:00,2007-03-13 08:00,,2007-01-27 00:00,2007-01-27 00:00,,,2006-06-09 08:00,2006-06-12 17:00,,,,,PT_Normal,,,,,PwViJwNKSWeiDTQSx1OGew,PXgm72mBUkKvN3pz6AM0Yx,,,N,0,0,,,2007-02-01 02:42,2007-02-04 01:05,hbe4678,hbe4678,,,0
1793,12457974,14517,6816055,13331,1,100,N,N,N,CP_Units,TT_Task,DT_FixedDUR2,RV_OK,TK_Complete,EM03YPI132,03Y Planning Release,,,,0,0,0,0,8,0,0,0,,2006-07-28 00:00,2006-08-04 00:00,2007-03-13 08:00,2007-03-13 08:00,,2007-01-27 00:00,2007-01-27 00:00,,,2006-07-24 08:00,2006-07-24 17:00,,,,,PT_Normal,,,,,H3uz79EbTEy9ZKzwXHyt8g,fGM0O+wOxkazwBHR+X4+mR,,,N,0,0,,,2007-02-01 02:42,2007-02-04 01:05,hbe4678,hbe4678,,,0
1794,12457975,14517,6816055,13331,1,100,N,N,N,CP_Units,TT_Task,DT_FixedDUR2,RV_OK,TK_Complete,EM03YPI134,03Y Detail Model Development,,,,0,0,0,0,240,0,0,0,,2006-08-10 08:00,2006-08-29 00:00,2007-03-13 08:00,2007-03-13 08:00,,2007-01-27 00:00,2007-01-27 00:00,,,2006-08-10 08:00,2006-09-20 17:00,,,,,PT_Normal,,,,,/dXDE6kiTner7+ncOweP7A,XjTgk4wTFUmL4/69+yHGwR,,,N,0,0,,,2007-02-01 02:42,2007-02-04 01:05,hbe4678,hbe4678,,,0
1795,12457976,14517,6816055,13331,1,100,N,N,N,CP_Units,TT_Task,DT_FixedDUR2,RV_OK,TK_Complete,EM03YPI135,03Y A/G Piping Iso's - Issue IFC,,,,0,0,0,0,120,0,0,0,,2006-09-04 00:00,2006-10-20 17:00,2007-04-30 08:00,2007-04-30 08:00,,2007-01-27 00:00,2007-01-27 00:00,,,2006-09-15 08:00,2006-10-05 17:00,,,,,PT_Normal,,,,,OFh9+/lzQ3CykFBRukUUZQ,EQG7zyrZ9EWm1dtcHu3ShR,,,N,0,0,,,2007-02-01 02:42,2007-02-04 01:05,hbe4678,hbe4678,,,0
1796,12457977,14517,6816055,13331,1,100,N,N,N,CP_Units,TT_Task,DT_FixedDUR2,RV_OK,TK_Complete,EM03YPI138,03Y Design / Issue Pipe Supports IFC,,,,0,0,0,0,360,0,0,0,,2006-09-04 00:00,2006-10-20 17:00,2007-06-11 08:00,2007-06-11 08:00,,2007-01-27 00:00,2007-01-27 00:00,,,2006-09-15 08:00,2006-11-17 17:00,,,,,PT_Normal,,,,,uKUPCMLQThKmTaRAge7kvQ,wwWJ41VAdEu91pQw6eS/YR,,,N,0,0,,,2007-02-01 02:42,2007-02-04 01:05,hbe4678,hbe4678,,,0
1797,12457978,14517,6816055,13331,1,100,N,N,N,CP_Units,TT_Task,DT_FixedDUR2,RV_OK,TK_Complete,EM03UPIFWC,03U Model Review Mtg (HOC/MEC) - Firewater,,,,0,0,0,0,40,0,0,0,,2005-11-28 00:00,2005-12-02 17:00,2007-03-13 08:00,2007-03-13 08:00,,2007-01-27 00:00,2007-01-27 00:00,,,2005-11-14 08:00,2005-11-18 17:00,,,,,PT_Normal,,,,,UapFI9oLSmuWj7TRWuw/1Q,dOv8zIoPaE2YYsWju05fiB,,,N,0,0,,,2007-02-01 02:42,2007-02-04 01:05,hbe4678,hbe4678,,,0
1798,12457979,14517,6816055,13331,1,100,N,N,N,CP_Units,TT_Task,DT_FixedDUR2,RV_OK,TK_Complete,EM03UPIFWD,03U Planning Release - Firewater,,,,0,0,0,0,40,0,0,0,,2005-12-19 08:00,2006-01-23 00:00,2007-03-13 08:00,2007-03-13 08:00,,2007-01-27 00:00,2007-01-27 00:00,,,2005-12-19 08:00,2005-12-23 17:00,,,,,PT_Normal,,,,,FmDto7QgT0i0xDGlHY5hlg,BlMVvSmSVkuP14B2aUqZTx,,,N,0,0,,,2007-02-01 02:42,2007-02-04 01:05,hbe4678,hbe4678,,,0
1799,12457980,14517,6816055,13331,1,100,N,N,N,CP_Units,TT_Task,DT_FixedDUR2,RV_OK,TK_Complete,EM03UPIFWE,"03U Detail Model Development - FW, Outfall/Acid/Caustic Sewer",,,,0,0,0,0,200,0,0,0,,2006-02-27 08:00,2006-03-10 00:00,2007-03-13 08:00,2007-03-13 08:00,,2007-01-27 00:00,2007-01-27 00:00,,,2006-02-27 08:00,2006-04-03 17:00,,,,,PT_Normal,,,,,mneg13U0SaaAZ2F56QOj9g,H6kBckerRUixp86YQjGDth,,,N,0,0,,,2007-02-01 02:42,2007-02-04 01:05,hbe4678,hbe4678,,,0
1800,12457981,14517,6816055,13331,1,100,N,N,N,CP_Units,TT_Task,DT_FixedDUR2,RV_OK,TK_Complete,EM03UPIFWF,03U IDP - Detail Design - HDPE Piping (FW),,,,0,0,0,0,40,0,0,0,,2006-03-13 08:00,2006-03-17 17:00,2007-03-13 08:00,2007-03-13 08:00,,2007-01-27 00:00,2007-01-27 00:00,,,2006-03-13 08:00,2006-03-17 17:00,,,,,PT_Normal,,,,,kO4uoKP0RLCACDOuI+Lk9Q,C2F4mePOf0qvbNOcRxiH6x,,,N,0,0,,,2007-02-01 02:42,2007-02-04 01:05,hbe4678,hbe4678,,,0
1801,12457982,14517,6816055,13331,1,100,N,N,N,CP_Units,TT_Task,DT_FixedDUR2,RV_OK,TK_Complete,EM03UPIFWG,03U Iso Issue IFC   - HDPE Piping (FW),,,,0,0,0,0,40,0,0,0,,2006-03-27 08:00,2006-03-31 17:00,2007-08-06 08:01,2007-08-06 08:01,,2007-01-27 00:00,2007-01-27 00:00,,,2006-03-27 08:00,2006-03-31 17:00,,,,,PT_Normal,,,,,SQCfpaR6QMi5RXGvdsekrg,9xzGjjzVHEeWQ05D3u3IeR,,,N,0,0,,,2007-02-01 02:42,2007-02-04 01:05,hbe4678,hbe4678,,,0
1802,12457983,14517,6816055,13331,1,100,N,N,N,CP_Units,TT_Task,DT_FixedDUR2,RV_OK,TK_Complete,EM03UPIFWB,03U IDP - Plant Layout   - Firewater,,,,0,0,0,0,40,0,0,0,,2005-11-01 00:00,2005-11-11 00:00,2007-03-13 08:00,2007-03-13 08:00,,2007-01-27 00:00,2007-01-27 00:00,,,2005-11-21 08:00,2005-11-25 17:00,,,,,PT_Normal,,,,,eyMy42iNQfelXcrgMcqmbQ,+R6jtqFshU6ZX3gp7kvwvB,,,N,0,0,,,2007-02-01 02:42,2007-02-04 01:05,hbe4678,hbe4678,,,0
1803,12457984,14517,6816055,13331,1,100,N,N,N,CP_Units,TT_Task,DT_FixedDUR2,RV_OK,TK_Complete,EM03UPICSB,03U IDP - Plant Layout   - Caustic Sewer,,,,0,0,0,0,40,0,0,0,,2005-11-01 00:00,2005-11-11 00:00,2007-03-13 08:00,2007-03-13 08:00,,2007-01-27 00:00,2007-01-27 00:00,,,2005-11-21 08:00,2005-11-25 17:00,,,,,PT_Normal,,,,,F03Dr6GgTiqtDdfO6IXprw,gAn1oxMz0E6Y7Usga+eGCh,,,N,0,0,,,2007-02-01 02:42,2007-02-04 01:05,hbe4678,hbe4678,,,0
1804,12457985,14517,6816055,13331,1,100,N,N,N,CP_Units,TT_Task,DT_FixedDUR2,RV_OK,TK_Complete,EM03UPIASC,03U Model Review Mtg (HOC/MEC) - Acid Sewer,,,,0,0,0,0,40,0,0,0,,2005-11-28 00:00,2005-12-02 17:00,2007-03-13 08:00,2007-03-13 08:00,,2007-01-27 00:00,2007-01-27 00:00,,,2005-11-14 08:00,2005-11-18 17:00,,,,,PT_Normal,,,,,iG+aQtrNRTK+ebFAzgAKCA,47VTtYbdNkujteAMZbfEzB,,,N,0,0,,,2007-02-01 02:42,2007-02-04 01:05,hbe4678,hbe4678,,,0
1805,12457986,14517,6816055,13331,1,100,N,N,N,CP_Units,TT_Task,DT_FixedDUR2,RV_OK,TK_Complete,EM03UPIASD,03U Planning Release - Acid Sewer,,,,0,0,0,0,40,0,0,0,,2005-12-19 08:00,2006-01-23 00:00,2007-03-13 08:00,2007-03-13 08:00,,2007-01-27 00:00,2007-01-27 00:00,,,2005-12-19 08:00,2005-12-23 17:00,,,,,PT_Normal,,,,,Gn6PbPHDQPaZGmZ08iJGcQ,Wp8zSuiJzUm3RkJ5ACPyEh,,,N,0,0,,,2007-02-01 02:42,2007-02-04 01:05,hbe4678,hbe4678,,,0
1806,12457987,14517,6816055,13331,1,100,N,N,N,CP_Units,TT_Task,DT_FixedDUR2,RV_OK,TK_Complete,EM03UPIASF,03U IDP - Detail Design   - Other HDPE (AS & NA),,,,0,0,0,0,40,0,0,0,,2006-03-13 08:00,2006-05-12 00:00,2007-03-13 08:00,2007-03-13 08:00,,2007-01-27 00:00,2007-01-27 00:00,,,2006-03-13 08:00,2006-03-17 17:00,,,,,PT_Normal,,,,,+nyr3wOGQPG5lFw+R6z7qg,rhbBohjUZ0emOBO/V/U4GB,,,N,0,0,,,2007-02-01 02:42,2007-02-04 01:05,hbe4678,hbe4678,,,0
1807,12457988,14517,6816055,13331,1,100,N,N,N,CP_Units,TT_Task,DT_FixedDUR2,RV_OK,TK_Complete,EM03UPIASG,03U Iso Issue IFC   - Other HDPE (AS & NA),,,,0,0,0,0,40,0,0,0,,2006-05-22 08:00,2006-06-13 00:00,2007-06-17 08:00,2007-06-17 08:00,,2007-01-27 00:00,2007-01-27 00:00,,,2006-05-22 08:00,2006-05-26 17:00,,,,,PT_Normal,,,,,kneLjNSGT5yr8dYPCkhHpQ,E0iN9ACZA0uI75iIgj2RNR,,,N,0,0,,,2007-02-01 02:42,2007-02-04 01:05,hbe4678,hbe4678,,,0
1808,12457989,14517,6816055,13331,1,100,N,N,N,CP_Units,TT_Task,DT_FixedDUR2,RV_OK,TK_Complete,EM03UPIASB,03U IDP - Plant Layout   - Acid Sewer,,,,0,0,0,0,40,0,0,0,,2005-11-01 00:00,2005-11-11 00:00,2007-03-13 08:00,2007-03-13 08:00,,2007-01-27 00:00,2007-01-27 00:00,,,2005-11-21 08:00,2005-11-25 17:00,,,,,PT_Normal,,,,,SM34NmOKSme73X/0RgNLGw,4TUdiHRGcke2Jz+K/0MaYR,,,N,0,0,,,2007-02-01 02:42,2007-02-04 01:05,hbe4678,hbe4678,,,0
1809,12457990,14517,6816055,13331,1,100,N,N,N,CP_Units,TT_Task,DT_FixedDUR2,RV_OK,TK_Complete,EM03UPIOSC,03U Model Review Mtg (HOC/MEC) - Outfall Sewer,,,,0,0,0,0,40,0,0,0,,2005-11-28 00:00,2005-12-02 17:00,2007-03-13 08:00,2007-03-13 08:00,,2007-01-27 00:00,2007-01-27 00:00,,,2005-11-14 08:00,2005-11-18 17:00,,,,,PT_Normal,,,,,BMBX3YAVRJ2qBquv8B7/sw,4MqX1iuR5kiujnLywpGapR,,,N,0,0,,,2007-02-01 02:42,2007-02-04 01:05,hbe4678,hbe4678,,,0
1810,12457991,14517,6816055,13331,1,100,N,N,N,CP_Units,TT_Task,DT_FixedDUR2,RV_OK,TK_Complete,EM03UPIOSD,03U Planning Release - Outfall Sewer,,,,0,0,0,0,40,0,0,0,,2005-12-19 08:00,2006-01-23 00:00,2007-03-13 08:00,2007-03-13 08:00,,2007-01-27 00:00,2007-01-27 00:00,,,2005-12-19 08:00,2005-12-23 17:00,,,,,PT_Normal,,,,,azrsiRnBQ7iR+xfTSA1vEQ,b/C9SYxwHEaIpB4qoFM2qx,,,N,0,0,,,2007-02-01 02:42,2007-02-04 01:05,hbe4678,hbe4678,,,0
1811,12457992,14517,6816055,13331,1,100,N,N,N,CP_Units,TT_Task,DT_FixedDUR2,RV_OK,TK_Complete,EM03UPIOSF,03U IDP - Detail Design - Metalic Piping (OS),,,,0,0,0,0,40,0,0,0,,2006-03-13 08:00,2006-05-05 00:00,2007-03-13 08:00,2007-03-13 08:00,,2007-01-27 00:00,2007-01-27 00:00,,,2006-03-13 08:00,2006-03-17 17:00,,,,,PT_Normal,,,,,TozzRYSQTWmr48iTnYZcgQ,2XUrzfSmL0SXlcfnssANBx,,,N,0,0,,,2007-02-01 02:42,2007-02-04 01:05,hbe4678,hbe4678,,,0
1812,12457993,14517,6816055,13331,1,100,N,N,N,CP_Units,TT_Task,DT_FixedDUR2,RV_OK,TK_Complete,EM03UPIOSG,03U Iso Issue IFC   - Metalic Piping (OS),,,,0,0,0,0,40,0,0,0,,2006-05-22 08:00,2006-06-05 17:00,2007-06-17 08:00,2007-06-17 08:00,,2007-01-27 00:00,2007-01-27 00:00,,,2006-05-22 08:00,2006-05-26 17:00,,,,,PT_Normal,,,,,vBEpwI2lQ2eK9r6TPpCqag,KvvQUb1pi0213BT116NvBB,,,N,0,0,,,2007-02-01 02:42,2007-02-04 01:05,hbe4678,hbe4678,,,0
1813,12457994,14517,6816055,13331,1,100,N,N,N,CP_Units,TT_Task,DT_FixedDUR2,RV_OK,TK_Complete,EM03UPIOSB,03U IDP - Plant Layout   - Outfall Sewer,,,,0,0,0,0,40,0,0,0,,2005-11-01 00:00,2005-11-11 00:00,2007-03-13 08:00,2007-03-13 08:00,,2007-01-27 00:00,2007-01-27 00:00,,,2005-11-21 08:00,2005-11-25 17:00,,,,,PT_Normal,,,,,ywZmLEXPSeiFAZ07fJclGQ,pyQi6nkXREiYHh5LkmrfAh,,,N,0,0,,,2007-02-01 02:42,2007-02-04 01:05,hbe4678,hbe4678,,,0
1814,12457995,14517,6816055,13331,1,100,N,N,N,CP_Units,TT_Task,DT_FixedDUR2,RV_OK,TK_Complete,EM03CPI120,03C Plant Layout Model,,,,0,0,0,0,280,0,0,0,,2005-10-31 08:00,2006-01-17 00:00,2007-03-13 08:00,2007-03-13 08:00,,2007-01-27 00:00,2007-01-27 00:00,,,2005-10-31 08:00,2005-12-20 17:00,,,,,PT_Normal,,,,,7V7+fuooTxavKt+Dk4mrKw,H0NGPmD7s0uZ3L7DBxivuR,,,N,0,0,,,2007-02-01 02:42,2007-02-04 01:05,hbe4678,hbe4678,,,0
1815,12457996,14517,6816055,13331,1,100,N,N,N,CP_Units,TT_Task,DT_FixedDUR2,RV_OK,TK_Complete,EM03CPI123,03C Plant Layout Nozzle Release,,,,0,0,0,0,40,0,0,0,,2005-12-19 08:00,2005-12-23 17:00,2007-05-08 08:00,2007-05-08 08:00,,2007-01-27 00:00,2007-01-27 00:00,,,2005-12-19 08:00,2005-12-23 17:00,,,,,PT_Normal,,,,,FJoEwITCSnGu6sEdJwxO8g,zIV2/ZLypkeHIjoQ9blMRB,,,N,0,0,,,2007-02-01 02:42,2007-02-04 01:05,hbe4678,hbe4678,,,0
1816,12457997,14517,6816055,13331,1,100,N,N,N,CP_Units,TT_Task,DT_FixedDUR2,RV_OK,TK_Complete,EM03CPI130,03C Model Review Mtg,,,,0,0,0,0,16,0,0,0,,2006-02-27 08:00,2006-02-28 17:00,2007-05-08 08:00,2007-05-08 08:00,,2007-01-27 00:00,2007-01-27 00:00,,,2006-02-27 08:00,2006-02-28 17:00,,,,,PT_Normal,,,,,73hA+kgZQg65EZjs8BUHUw,UV5EraYv5EOub1ONYN2iOR,,,N,0,0,,,2007-02-01 02:42,2007-02-04 01:05,hbe4678,hbe4678,,,0
1817,12457998,14517,6816055,13331,1,100,N,N,N,CP_Units,TT_Task,DT_FixedDUR2,RV_OK,TK_Complete,EM03CPI132,03C Planning Release,,,,0,0,0,0,8,0,0,0,,2006-04-11 08:00,2006-04-11 17:00,2007-05-08 08:00,2007-05-08 08:00,,2007-01-27 00:00,2007-01-27 00:00,,,2006-04-11 08:00,2006-04-11 17:00,,,,,PT_Normal,,,,,djYUKJJBTyW2tfieHrAoOQ,XIB/SIUZsUek56Q2CFLUox,,,N,0,0,,,2007-02-01 02:42,2007-02-04 01:05,hbe4678,hbe4678,,,0
1818,12457999,14517,6816055,13331,1,100,N,N,N,CP_Units,TT_Task,DT_FixedDUR2,RV_OK,TK_Complete,EM03CPI134,03C Detail Model Development,,,,0,0,0,0,240,0,0,0,,2006-04-12 08:00,2006-05-18 17:00,2007-05-08 08:00,2007-05-08 08:00,,2007-01-27 00:00,2007-01-27 00:00,,,2006-04-12 08:00,2006-05-26 17:00,,,,,PT_Normal,,,,,ygIw2+IqTcuc3tXmG48pgQ,+OwvDcMym0mdakwGJxKvcR,,,N,0,0,,,2007-02-01 02:42,2007-02-04 01:05,hbe4678,hbe4678,,,0
1819,12458000,14517,6816055,13331,1,100,N,N,N,CP_Units,TT_Task,DT_FixedDUR2,RV_OK,TK_Complete,EM03CPI135,03C A/G Piping Iso's - Issue IFC,,,,0,0,0,0,88,0,0,0,,2006-06-22 00:00,2006-08-31 00:00,2007-05-08 08:00,2007-05-08 08:00,,2007-01-27 00:00,2007-01-27 00:00,,,2006-06-26 08:00,2006-07-10 17:00,,,,,PT_Normal,,,,,6PDm5+BSSXOWUqmF5Qx0Sw,11ZqPLztoUegHkvLsb7hAR,,,N,0,0,,,2007-02-01 02:42,2007-02-04 01:05,hbe4678,hbe4678,,,0
1820,12458001,14517,6816055,13331,1,100,N,N,N,CP_Units,TT_Task,DT_FixedDUR2,RV_OK,TK_Complete,EM03CPI138,03C Design / Issue Pipe Supports IFC,,,,0,0,0,0,360,0,0,0,,2006-04-20 08:00,2006-08-31 00:00,2007-10-30 08:00,2007-10-30 08:00,,2007-01-27 00:00,2007-01-27 00:00,,,2006-04-20 08:00,2006-06-22 17:00,,,,,PT_Normal,,,,,RADFxAoQTF27ZIF/S+UcvQ,aP0EZNmUyE+gtM/C90kuYx,,,N,0,0,,,2007-02-01 02:42,2007-02-04 01:05,hbe4678,hbe4678,,,0
1821,12458002,14517,6816055,13331,1,100,N,N,N,CP_Units,TT_Task,DT_FixedDUR2,RV_OK,TK_Complete,EM03DPI120,03D Plant Layout Model,,,,0,0,0,0,680,0,0,0,,2005-09-07 08:00,2006-03-17 17:00,2007-03-13 08:00,2007-03-13 08:00,,2007-01-27 00:00,2007-01-27 00:00,,,2005-09-07 08:00,2006-01-13 17:00,,,,,PT_Normal,,,,,PdAnf2bLQHCUVdVtliGmVQ,Bpi4QrWPBUSe14QyULxOBB,,,N,0,0,,,2007-02-01 02:42,2007-02-04 01:05,hbe4678,hbe4678,,,0
1822,12458003,14517,6816055,13331,1,100,N,N,N,CP_Units,TT_Task,DT_FixedDUR2,RV_OK,TK_Complete,EM03DPI123,03D Plant Layout Nozzle Release,,,,0,0,0,0,40,0,0,0,,2005-10-18 08:00,2005-10-27 17:00,2007-05-21 08:01,2007-05-21 08:01,,2007-01-27 00:00,2007-01-27 00:00,,,2005-10-18 08:00,2005-10-24 17:00,,,,,PT_Normal,,,,,iIPjefPITDiw+9NpSgaZeQ,jjP5X3Q9RkaGppIvfguIdB,,,N,0,0,,,2007-02-01 02:42,2007-02-04 01:05,hbe4678,hbe4678,,,0
1823,12458004,14517,6816055,13331,1,100,N,N,N,CP_Units,TT_Task,DT_FixedDUR2,RV_OK,TK_Complete,EM03DPI130,03D Model Review Mtg,,,,0,0,0,0,8,0,0,0,,2006-02-16 00:00,2006-02-16 00:00,2007-05-21 08:01,2007-05-21 08:01,,2007-01-27 00:00,2007-01-27 00:00,,,2006-03-06 08:00,2006-03-06 17:00,,,,,PT_Normal,,,,,3OmSWHXRTeupfq/We0/7lw,+HgImJhDi0m/faehL9wWHx,,,N,0,0,,,2007-02-01 02:42,2007-02-04 01:05,hbe4678,hbe4678,,,0
1824,12458005,14517,6816055,13331,1,100,N,N,N,CP_Units,TT_Task,DT_FixedDUR2,RV_OK,TK_Complete,EM03DPI132,03D Planning Release,,,,0,0,0,0,8,0,0,0,,2006-03-27 08:00,2006-03-27 17:00,2007-05-21 08:01,2007-05-21 08:01,,2007-01-27 00:00,2007-01-27 00:00,,,2006-03-27 08:00,2006-03-27 17:00,,,,,PT_Normal,,,,,uuAIA3JGRtuxgAnxK7fjRQ,BPbkPzrD7EeSEB6YZTQnPx,,,N,0,0,,,2007-02-01 02:42,2007-02-04 01:05,hbe4678,hbe4678,,,0
1825,12458006,14517,6816055,13331,1,100,N,N,N,CP_Units,TT_Task,DT_FixedDUR2,RV_OK,TK_Complete,EM03DPI134,03D  Detail Model Development,,,,0,0,0,0,240,0,0,0,,2006-05-30 00:00,2006-07-14 17:00,2007-07-09 08:00,2007-07-09 08:00,,2007-01-27 00:00,2007-01-27 00:00,,,2006-06-05 08:00,2006-07-14 17:00,,,,,PT_Normal,,,,,NZ25Su60Q+m9g9U1etWi0A,g5ncSpt2PUukDzUUL5nzpR,,,N,0,0,,,2007-02-01 02:42,2007-02-04 01:05,hbe4678,hbe4678,,,0
1826,12458007,14517,6816055,13331,1,100,N,N,N,CP_Units,TT_Task,DT_FixedDUR2,RV_OK,TK_Complete,EM03DPI135,03D A/G Piping Iso's - Issue IFC,,,,0,0,0,0,120,0,0,0,,2006-08-28 00:00,2006-10-27 17:00,2007-08-21 08:01,2007-08-21 08:01,,2007-01-27 00:00,2007-01-27 00:00,,,2006-09-05 08:00,2006-09-25 17:00,,,,,PT_Normal,,,,,WujTm+OKRDyt0h3ipuK+3w,F9c3naj47kKba9BlQGL1tx,,,N,0,0,,,2007-02-01 02:42,2007-02-04 01:05,hbe4678,hbe4678,,,0
1827,12458008,14517,6816055,13331,1,100,N,N,N,CP_Units,TT_Task,DT_FixedDUR2,RV_OK,TK_Complete,EM03DPI138,03D Design / Issue Pipe Supports IFC,,,,0,0,0,0,360,0,0,0,,2006-09-05 00:00,2006-10-27 17:00,2007-11-20 08:01,2007-11-20 08:01,,2007-01-27 00:00,2007-01-27 00:00,,,2006-09-05 08:00,2006-11-07 17:00,,,,,PT_Normal,,,,,lKN2H9HdRGmJbN/q9jKwTg,hBQ54tUxo0iaEVNErEbfuh,,,N,0,0,,,2007-02-01 02:42,2007-02-04 01:05,hbe4678,hbe4678,,,0
1828,12458009,14517,6816055,13331,1,100,N,N,N,CP_Units,TT_Task,DT_FixedDUR2,RV_OK,TK_Complete,EM03EPI120,03E Plant Layout Model,,,,0,0,0,0,400,0,0,0,,2005-07-15 00:00,2006-06-27 17:00,2007-04-04 08:01,2007-04-04 08:01,,2007-01-27 00:00,2007-01-27 00:00,,,2005-08-29 08:00,2005-11-08 17:00,,,,,PT_Normal,,,,,t4aSeTGcSzSsasDsB4MHlA,upPQ4d3mKUm+Bdu4I9ZKqB,,,N,0,0,,,2007-02-01 02:42,2007-02-04 01:05,hbe4678,hbe4678,,,0
1829,12458010,14517,6816055,13331,1,100,N,N,N,CP_Units,TT_Task,DT_FixedDUR2,RV_OK,TK_Complete,EM03EPI123,03E Plant Layout Nozzle Release,,,,0,0,0,0,40,0,0,0,,2006-06-23 00:00,2006-06-29 00:00,2007-04-04 08:01,2007-04-04 08:01,,2007-01-27 00:00,2007-01-27 00:00,,,2006-07-03 08:00,2006-07-07 17:00,,,,,PT_Normal,,,,,9qqBKfHRSri9sWQpS4aoIA,1EeGDNoKf0m0Dg/niGTMhR,,,N,0,0,,,2007-02-01 02:42,2007-02-04 01:05,hbe4678,hbe4678,,,0
1830,12458011,14517,6816055,13331,1,100,N,N,N,CP_Units,TT_Task,DT_FixedDUR2,RV_OK,TK_Complete,EM03EPI130,03E Model Review Mtg,,,,0,0,0,0,32,0,0,0,,2006-06-29 00:00,2006-06-29 00:00,2007-04-04 08:01,2007-04-04 08:01,,2007-01-27 00:00,2007-01-27 00:00,,,2006-06-28 08:00,2006-07-03 17:00,,,,,PT_Normal,,,,,zSLV06lHSBy5foDqTH9Lvw,FXr1TzB68ECLiHjRhWb2dx,,,N,0,0,,,2007-02-01 02:42,2007-02-04 01:05,hbe4678,hbe4678,,,0
1831,12458012,14517,6816055,13331,1,100,N,N,N,CP_Units,TT_Task,DT_FixedDUR2,RV_OK,TK_Complete,EM03EPI132,03E Planning Release,,,,0,0,0,0,8,0,0,0,,2006-08-23 00:00,2006-08-23 00:00,2007-04-04 08:01,2007-04-04 08:01,,2007-01-27 00:00,2007-01-27 00:00,,,2006-08-29 08:00,2006-08-29 17:00,,,,,PT_Normal,,,,,hBTfa+BDTWirYd+HPlx3Rg,G46uB8q3+0GbZoSgGLNixR,,,N,0,0,,,2007-02-01 02:42,2007-02-04 01:05,hbe4678,hbe4678,,,0
1832,12458013,14517,6816055,13331,1,100,N,N,N,CP_Units,TT_Task,DT_FixedDUR2,RV_OK,TK_Complete,EM03EPI134,03E Detail Model Development,,,,0,0,0,0,240,0,0,0,,2006-08-21 08:00,2006-10-10 00:00,2007-07-09 08:00,2007-07-09 08:00,,2007-01-27 00:00,2007-01-27 00:00,,,2006-08-21 08:00,2006-09-29 17:00,,,,,PT_Normal,,,,,gYss0/nLSpWMdXvxyfnArw,/86JdH7F5kyEBOb1bKP0px,,,N,0,0,,,2007-02-01 02:42,2007-02-04 01:05,hbe4678,hbe4678,,,0
1833,12458014,14517,6816055,13331,1,100,N,N,N,CP_Units,TT_Task,DT_FixedDUR2,RV_OK,TK_Complete,EM03EPI135,03E A/G Piping Iso's - Issue IFC,,,,0,0,0,0,224,0,0,0,,2006-10-04 08:00,2006-12-18 00:00,2007-04-04 08:01,2007-04-04 08:01,,2007-01-27 00:00,2007-01-27 00:00,,,2006-10-04 08:00,2006-11-13 17:00,,,,,PT_Normal,,,,,Ygm/iXKHQTyknvPs1e/8fw,1uDIOs6PuEmL4Z2nhRflxh,,,N,0,0,,,2007-02-01 02:42,2007-02-04 01:05,hbe4678,hbe4678,,,0
1834,12458015,14517,6816055,13331,1,100,N,N,N,CP_Units,TT_Task,DT_FixedDUR2,RV_OK,TK_Complete,EM03EPI138,03E Design / Issue Pipe Supports IFC,,,,0,0,0,0,360,0,0,0,,2006-10-04 08:00,2006-12-18 00:00,2007-09-03 08:01,2007-09-03 08:01,,2007-01-27 00:00,2007-01-27 00:00,,,2006-10-04 08:00,2006-12-07 17:00,,,,,PT_Normal,,,,,4nzNb1WjQDWHtzx1GtX1vg,uSOoN6Gwo0GVXYAY/6pFMR,,,N,0,0,,,2007-02-01 02:42,2007-02-04 01:05,hbe4678,hbe4678,,,0
1835,12458016,14517,6816055,13331,1,100,N,N,N,CP_Units,TT_Task,DT_FixedDUR2,RV_OK,TK_Complete,EM03YPI120,03Y Plant Layout Model,,,,0,0,0,0,320,0,0,0,,2005-08-22 00:00,2006-06-07 00:00,2007-03-13 08:00,2007-03-13 08:00,,2007-01-27 00:00,2007-01-27 00:00,,,2005-09-19 08:00,2005-11-14 17:00,,,,,PT_Normal,,,,,1a6b6pVhTwaVBM9JzfIzsQ,lNIHY1lTEEWlH0cwlgfbYx,,,N,0,0,,,2007-02-01 02:42,2007-02-04 01:05,hbe4678,hbe4678,,,0
1836,12458017,14517,6816055,13330,1,100,N,N,N,CP_Units,TT_Task,DT_FixedDUR2,RV_OK,TK_Complete,EK030PI014,Plot Plan - Utility Plant Issue IFC,,,,0,0,0,0,240,0,0,0,,2006-02-27 08:00,2006-04-28 17:00,2007-04-28 08:01,2007-04-28 08:01,,2007-01-27 00:00,2007-01-27 00:00,,,2006-02-27 08:00,2006-04-07 17:00,,,,,PT_Normal,,,,,sgf7ii1eSB6l+WTChnTqUQ,nDNW5utsOEmBasoFN1xb1h,,,N,0,0,,,2007-02-01 02:42,2007-02-04 01:05,hbe4678,hbe4678,,,0
1837,12458018,14517,6816055,13331,1,100,N,N,N,CP_Units,TT_Task,DT_FixedDUR2,RV_OK,TK_Complete,EM03FPI120,03F Plant Layout Model,,,,0,0,0,0,152,0,0,0,,2006-03-24 08:00,2006-04-12 00:00,2007-03-13 08:00,2007-03-13 08:00,,2007-01-27 00:00,2007-01-27 00:00,,,2006-03-24 08:00,2006-04-21 17:00,,,,,PT_Normal,,,,,yth0ZjFCST6P126ypTSGOA,+LLfps+0GUqRd3txdQdlAh,,,N,0,0,,,2007-02-01 02:42,2007-02-04 01:05,hbe4678,hbe4678,,,0
1838,12458019,14517,6816055,13331,1,100,N,N,N,CP_Units,TT_Task,DT_FixedDUR2,RV_OK,TK_Complete,EM03FPI123,03F Plant Layout Nozzle Release,,,,0,0,0,0,40,0,0,0,,2006-04-10 08:00,2006-04-17 08:01,2007-05-07 08:00,2007-05-07 08:00,,2007-01-27 00:00,2007-01-27 00:00,,,2006-04-10 08:00,2006-04-18 17:00,,,,,PT_Normal,,,,,S+0U4kmrT9+eTpfJ0mNRtw,9KHAn3jmqkaiO0u37qkHyR,,,N,0,0,,,2007-02-01 02:42,2007-02-04 01:05,hbe4678,hbe4678,,,0
1839,12458020,14517,6816055,13331,1,100,N,N,N,CP_Units,TT_Task,DT_FixedDUR2,RV_OK,TK_Complete,EM03FPI130,03F Model Review Mtg,,,,0,0,0,0,8,0,0,0,,2006-06-14 00:00,2006-06-14 00:00,2007-05-07 08:00,2007-05-07 08:00,,2007-01-27 00:00,2007-01-27 00:00,,,2006-06-23 08:00,2006-06-23 17:00,,,,,PT_Normal,,,,,+w3eWB8IR/GTH1P4Jqineg,bpci+jsxPU6yPM8OEardih,,,N,0,0,,,2007-02-01 02:42,2007-02-04 01:05,hbe4678,hbe4678,,,0
1840,12458021,14517,6816055,13331,1,100,N,N,N,CP_Units,TT_Task,DT_FixedDUR2,RV_OK,TK_Complete,EM03FPI132,03F Planning Release,,,,0,0,0,0,8,0,0,0,,2006-08-04 00:00,2006-08-04 00:00,2007-05-07 08:00,2007-05-07 08:00,,2007-01-27 00:00,2007-01-27 00:00,,,2006-08-09 08:00,2006-08-09 17:00,,,,,PT_Normal,,,,,TWypwrTmTyeZHfXIxzhegg,psfis7qW6UmPdyQ2cWzA+R,,,N,0,0,,,2007-02-01 02:42,2007-02-04 01:05,hbe4678,hbe4678,,,0
1841,12458022,14517,6816055,13331,1,100,N,N,N,CP_Units,TT_Task,DT_FixedDUR2,RV_OK,TK_Complete,EM03FPI134,03F Detail Model Development,,,,0,0,0,0,320,0,0,0,,2006-08-07 00:00,2006-08-17 00:00,2007-05-10 08:01,2007-05-10 08:01,,2007-01-27 00:00,2007-01-27 00:00,,,2006-08-10 08:00,2006-10-04 17:00,,,,,PT_Normal,,,,,mx1peYh5Q2qWPI3aWYRORw,tCVPgOZGkECgC/EevOj2rh,,,N,0,0,,,2007-02-01 02:42,2007-02-04 01:05,hbe4678,hbe4678,,,0
1842,12458023,14517,6816055,13331,1,100,N,N,N,CP_Units,TT_Task,DT_FixedDUR2,RV_OK,TK_Complete,EM03FPI135,03F A/G Piping Iso's - Issue IFC,,,,0,0,0,0,120,0,0,0,,2006-09-04 00:00,2006-12-22 17:00,2007-08-07 08:01,2007-08-07 08:01,,2007-01-27 00:00,2007-01-27 00:00,,,2006-09-11 08:00,2006-09-29 17:00,,,,,PT_Normal,,,,,ToGH7yTORKij+i9T68Xq1w,wxSCsJy3iEWRvhKstDzWfx,,,N,0,0,,,2007-02-01 02:42,2007-02-04 01:05,hbe4678,hbe4678,,,0
1843,12458024,14517,6816055,13331,1,100,N,N,N,CP_Units,TT_Task,DT_FixedDUR2,RV_OK,TK_Complete,EM03FPI138,03F Design / Issue Pipe Supports IFC,,,,0,0,0,0,536,0,0,0,,2006-09-04 00:00,2006-12-22 17:00,2007-10-19 08:00,2007-10-19 08:00,,2007-01-27 00:00,2007-01-27 00:00,,,2006-09-11 08:00,2006-12-15 17:00,,,,,PT_Normal,,,,,L7Is8L1VRk6bBVf1lPR1ow,qB0Xt6vcGUizbbq2bP3mlh,,,N,0,0,,,2007-02-01 02:42,2007-02-04 01:05,hbe4678,hbe4678,,,0
1844,12458025,14517,6816055,13331,1,100,N,N,N,CP_Units,TT_Task,DT_FixedDUR2,RV_OK,TK_Complete,EM03API120,03A Plant Layout Model,,,,0,0,0,0,496,0,0,0,,2005-08-22 00:00,2006-05-29 17:00,2007-03-13 08:00,2007-03-13 08:00,,2007-01-27 00:00,2007-01-27 00:00,,,2005-08-18 08:01,2005-11-16 08:01,,,,,PT_Normal,,,,,XdnhNXroRMqCcorZ7Zuevg,+TkGFme1Ekqyh6XbDvdVWB,,,N,0,0,,,2007-02-01 02:42,2007-02-04 01:05,hbe4678,hbe4678,,,0
1845,12458026,14517,6816055,13331,1,100,N,N,N,CP_Units,TT_Task,DT_FixedDUR2,RV_OK,TK_Complete,EM03API123,03A Plant Layout Nozzle Release,,,,0,0,0,0,167.983333,0,0,0,,2005-09-15 00:00,2005-10-28 00:00,2007-04-02 08:00,2007-04-02 08:00,,2007-01-27 00:00,2007-01-27 00:00,,,2005-09-19 08:00,2005-10-17 16:59,,,,,PT_Normal,,,,,QnoEUJ3RQxmUUT5ZG7y7fA,I8JJjX1YAEyUb0hmU6TDLx,,,N,0,0,,,2007-02-01 02:42,2007-02-04 01:05,hbe4678,hbe4678,,,0
1846,12458027,14517,6816055,13331,1,100,N,N,N,CP_Units,TT_Task,DT_FixedDUR2,RV_OK,TK_Complete,EM03API130,03A Model Review Mtg,,,,0,0,0,0,8,0,0,0,,2006-05-30 08:00,2006-05-30 17:00,2007-04-02 08:00,2007-04-02 08:00,,2007-01-27 00:00,2007-01-27 00:00,,,2006-05-30 08:00,2006-05-30 17:00,,,,,PT_Normal,,,,,gHmCG4oYQDCItTbv4WZDbQ,qTpQLdC5REusR4pNgGcexh,,,N,0,0,,,2007-02-01 02:42,2007-02-04 01:05,hbe4678,hbe4678,,,0
1847,12458028,14517,6816055,13331,1,100,N,N,N,CP_Units,TT_Task,DT_FixedDUR2,RV_OK,TK_Complete,EM03API132,03A Planning Release,,,,0,0,0,0,16,0,0,0,,2006-08-04 00:00,2006-08-07 00:00,2007-04-02 08:00,2007-04-02 08:00,,2007-01-27 00:00,2007-01-27 00:00,,,2006-08-24 08:00,2006-08-25 17:00,,,,,PT_Normal,,,,,W+R4yVF5QQyiY1qchcgSiQ,1DqTww7nkUWwwkVsdODhKx,,,N,0,0,,,2007-02-01 02:42,2007-02-04 01:05,hbe4678,hbe4678,,,0
1848,12458029,14517,6816055,13331,1,100,N,N,N,CP_Units,TT_Task,DT_FixedDUR2,RV_OK,TK_Complete,EM03API134,03A Detail Model Development,,,,0,0,0,0,160,0,0,0,,2006-08-14 08:00,2006-09-08 17:00,2007-04-02 08:00,2007-04-02 08:00,,2007-01-27 00:00,2007-01-27 00:00,,,2006-08-14 08:00,2006-09-08 17:00,,,,,PT_Normal,,,,,CIxDn0ZzTcO2IqWOfC6yXA,Btm5ErItMUOkcP+DSMzzHh,,,N,0,0,,,2007-02-01 02:42,2007-02-04 01:05,hbe4678,hbe4678,,,0
1849,12458030,14517,6816055,13331,1,100,N,N,N,CP_Units,TT_Task,DT_FixedDUR2,RV_OK,TK_Complete,EM03API135,03A A/G Piping Iso's - Issue IFC,,,,0,0,0,0,120,0,0,0,2006-09-29 08:00,2006-09-11 08:00,2006-12-18 17:00,2007-08-13 08:01,2007-08-13 08:01,,2007-01-27 00:00,2007-01-27 00:00,,,2006-09-11 08:00,2006-09-29 17:00,,,,CS_MSOA,PT_Normal,,,,,AExPRFoZRFGx236vBqRjPw,7/BhXXVx00aKhb0KFzMD/x,,,N,0,0,,,2007-02-01 02:42,2007-02-04 01:05,hbe4678,hbe4678,,,0
1850,12458031,14517,6816055,13331,1,100,N,N,N,CP_Units,TT_Task,DT_FixedDUR2,RV_OK,TK_Complete,EM03API138,03A Design / Issue Pipe Supports IFC,,,,0,0,0,0,360,0,0,0,,2006-09-11 08:00,2006-12-18 17:00,2007-08-30 08:00,2007-08-30 08:00,,2007-01-27 00:00,2007-01-27 00:00,,,2006-09-11 08:00,2006-11-13 17:00,,,,,PT_Normal,,,,,UGMk/mF6S8KoF/6GiABfgg,xE3nXukr40KhdqbbcncuMx,,,N,0,0,,,2007-02-01 02:42,2007-02-04 01:05,hbe4678,hbe4678,,,0
1851,12458032,14517,6816055,13331,1,100,N,N,N,CP_Units,TT_Task,DT_FixedDUR2,RV_OK,TK_Complete,EM03BPI120,03B Plant Layout Model,,,,0,0,0,0,240,0,0,0,,2006-03-22 00:00,2006-03-23 00:00,2007-05-07 08:00,2007-05-07 08:00,,2007-01-27 00:00,2007-01-27 00:00,,,2006-05-02 08:00,2006-06-12 17:00,,,,,PT_Normal,,,,,nsVPPr56Q+ScDYTvYAuoVQ,+TkGFme1Ekqyh6XbDvdVWB,,,N,0,0,,,2007-02-01 02:42,2007-02-04 01:05,hbe4678,hbe4678,,,0
1852,12458033,14517,6816055,13331,1,100,N,N,N,CP_Units,TT_Task,DT_FixedDUR2,RV_OK,TK_Complete,EM03BPI123,03B Plant Layout Nozzle Release,,,,0,0,0,0,40,0,0,0,,2006-05-16 08:00,2006-05-22 17:00,2007-06-12 08:01,2007-06-12 08:01,,2007-01-27 00:00,2007-01-27 00:00,,,2006-05-16 08:00,2006-05-22 17:00,,,,,PT_Normal,,,,,WnXl4vrCQ0ygJh2Mx6JxRw,I8JJjX1YAEyUb0hmU6TDLx,,,N,0,0,,,2007-02-01 02:42,2007-02-04 01:05,hbe4678,hbe4678,,,0
1853,12458034,14517,6816055,13331,1,100,N,N,N,CP_Units,TT_Task,DT_FixedDUR2,RV_OK,TK_Complete,EM03BPI130,03B Model Review Mtg,,,,0,0,0,0,8,0,0,0,,2006-06-01 00:00,2006-06-01 00:00,2007-05-07 08:00,2007-05-07 08:00,,2007-01-27 00:00,2007-01-27 00:00,,,2006-06-12 08:00,2006-06-12 17:00,,,,,PT_Normal,,,,,c+FrdBlMR2O3fO9OWS80cQ,qTpQLdC5REusR4pNgGcexh,,,N,0,0,,,2007-02-01 02:42,2007-02-04 01:05,hbe4678,hbe4678,,,0
1854,12458035,14517,6816055,13331,1,100,N,N,N,CP_Units,TT_Task,DT_FixedDUR2,RV_OK,TK_Complete,EM03BPI132,03B Planning Release,,,,0,0,0,0,40,0,0,0,,2006-07-17 08:00,2006-09-08 00:00,2007-05-07 08:00,2007-05-07 08:00,,2007-01-27 00:00,2007-01-27 00:00,,,2006-07-17 08:00,2006-07-21 17:00,,,,,PT_Normal,,,,,jsDbHNjBRnSqfCNrKmf94w,1DqTww7nkUWwwkVsdODhKx,,,N,0,0,,,2007-02-01 02:42,2007-02-04 01:05,hbe4678,hbe4678,,,0
1855,12458036,14517,6816055,13331,1,100,N,N,N,CP_Units,TT_Task,DT_FixedDUR2,RV_OK,TK_Complete,EM03BPI134,03B Detail Model Development,,,,0,0,0,0,240,0,0,0,,2006-08-14 00:00,2006-09-11 00:00,2007-07-09 08:00,2007-07-09 08:00,,2007-01-27 00:00,2007-01-27 00:00,,,2006-08-17 08:00,2006-09-27 17:00,,,,,PT_Normal,,,,,p+oEm1Y8Rjq15v/ETVdMTg,Btm5ErItMUOkcP+DSMzzHh,,,N,0,0,,,2007-02-01 02:42,2007-02-04 01:05,hbe4678,hbe4678,,,0
1856,12458037,14517,6816055,13331,1,100,N,N,N,CP_Units,TT_Task,DT_FixedDUR2,RV_OK,TK_Complete,EM03BPI135,03B A/G Piping Iso's - Issue IFC,,,,0,0,0,0,120,0,0,0,,2006-09-25 08:00,2006-10-27 17:00,2007-08-12 08:01,2007-08-12 08:01,,2007-01-27 00:00,2007-01-27 00:00,,,2006-09-25 08:00,2006-10-13 17:00,,,,,PT_Normal,,,,,n+ueMAiWT/y6zkH8HKQflQ,7/BhXXVx00aKhb0KFzMD/x,,,N,0,0,,,2007-02-01 02:42,2007-02-04 01:05,hbe4678,hbe4678,,,0
1857,12458038,14517,6816055,13331,1,100,N,N,N,CP_Units,TT_Task,DT_FixedDUR2,RV_OK,TK_Complete,EM03BPI138,03B Design / Issue Pipe Supports IFC,,,,0,0,0,0,360,0,0,0,,2006-09-25 08:00,2006-10-27 17:00,2008-02-02 08:01,2008-02-02 08:01,,2007-01-27 00:00,2007-01-27 00:00,,,2006-09-25 08:00,2006-11-28 17:00,,,,,PT_Normal,,,,,7fv14Z9kSra1mD+IcNNZlw,xE3nXukr40KhdqbbcncuMx,,,N,0,0,,,2007-02-01 02:42,2007-02-04 01:05,hbe4678,hbe4678,,,0
1858,12458039,14517,6816058,13330,0,100,N,N,N,CP_Units,TT_FinMile,DT_FixedDUR2,RV_OK,TK_Complete,EM03FSY172,03F P&IDs & Line List Issue - IFD,,,,0,0,0,0,0,0,0,0,,2006-08-14 08:01,2006-08-14 08:01,2007-10-27 08:01,2007-10-27 08:01,,2007-01-27 00:00,2007-01-27 00:00,,,2006-08-14 08:01,2006-08-14 08:01,,,,,PT_Normal,,,,,BADKHk+QQv679QQ61aAw/w,7sLGL6oU1k+T73QI7OmqqR,,,N,0,0,,,2007-02-01 02:42,2007-02-04 01:05,hbe4678,hbe4678,,,0
1859,12458040,14517,6816058,13330,1,100,N,N,N,CP_Units,TT_Task,DT_FixedDUR2,RV_OK,TK_Complete,EM03ASY172,03A P&IDs & Line List Issue - IFD,,,,0,0,0,0,8,0,0,0,,2006-07-24 00:00,2006-07-24 00:00,2007-04-02 08:00,2007-04-02 08:00,,2007-01-27 00:00,2007-01-27 00:00,,,2006-09-07 08:00,2006-09-07 17:00,,,,,PT_Normal,,,,,3mWaN//zTmqDlUdRcwHi3g,nJOr5hYGqEyTYR5JvhF31R,,,N,0,0,,,2007-02-01 02:42,2007-02-04 01:05,hbe4678,hbe4678,,,0
1860,12458041,14517,6816058,13330,0,100,N,N,N,CP_Units,TT_FinMile,DT_FixedDUR2,RV_OK,TK_Complete,EM03BSY172,03B P&IDs & Line List Issue - IFD,,,,0,0,0,0,0,0,0,0,,2006-08-31 00:00,2006-08-31 00:00,2007-08-12 08:01,2007-08-12 08:01,,2007-01-27 00:00,2007-01-27 00:00,,,2006-09-11 08:01,2006-09-11 08:01,,,,,PT_Normal,,,,,bM0Hbta+RN+tXGlPAxHJ1A,nJOr5hYGqEyTYR5JvhF31R,,,N,0,0,,,2007-02-01 02:42,2007-02-04 01:05,hbe4678,hbe4678,,,0
1861,12458042,14517,6816058,13330,0,100,N,N,N,CP_Units,TT_FinMile,DT_FixedDUR2,RV_OK,TK_Complete,EM03CSY172,03C P&IDs & Line List Issue - IFD,,,,0,0,0,0,0,0,0,0,,2006-05-11 00:00,2006-05-11 00:00,2007-05-08 08:00,2007-05-08 08:00,,2007-01-27 00:00,2007-01-27 00:00,,,2006-05-25 17:00,2006-05-25 17:00,,,,,PT_Normal,,,,,ncM58PJQTNi9bHPgHklqVg,gr1caqQZLUipkMrBlclyDR,,,N,0,0,,,2007-02-01 02:42,2007-02-04 01:05,hbe4678,hbe4678,,,0
1862,12458043,14517,6816058,13330,0,100,N,N,N,CP_Units,TT_FinMile,DT_FixedDUR2,RV_OK,TK_Complete,EM03DSY172,03D P&IDs & Line List Issue - IFD,,,,0,0,0,0,0,0,0,0,,2006-07-19 00:00,2006-07-19 00:00,2007-08-21 08:01,2007-08-21 08:01,,2007-01-27 00:00,2007-01-27 00:00,,,2006-07-17 08:01,2006-07-17 08:01,,,,,PT_Normal,,,,,1CCnftRZSJmTBZCXAKfwhA,sqgpzrVg6UuS/NmwXN2iqh,,,N,0,0,,,2007-02-01 02:42,2007-02-04 01:05,hbe4678,hbe4678,,,0
1863,12458044,14517,6816058,13330,0,100,N,N,N,CP_Units,TT_FinMile,DT_FixedDUR2,RV_OK,TK_Complete,EM03ESY172,03E P&IDs & Line List Issue - IFD,,,,0,0,0,0,0,0,0,0,,2006-09-12 17:00,2006-09-12 17:00,2007-04-04 08:01,2007-04-04 08:01,,2007-01-27 00:00,2007-01-27 00:00,,,2006-09-12 17:00,2006-09-12 17:00,,,,,PT_Normal,,,,,wRZfQE+MQwO35MCwfZgH3A,gf7JPz4IgUmxU/1BFMTmTh,,,N,0,0,,,2007-02-01 02:42,2007-02-04 01:05,hbe4678,hbe4678,,,0
1864,12458045,14517,6816058,13330,0,100,N,N,N,CP_Units,TT_FinMile,DT_FixedDUR2,RV_OK,TK_Complete,EM03YSY172,03Y P&IDs & Line List Issue - IFD,,,,0,0,0,0,0,0,0,0,,2006-08-16 08:01,2006-08-16 08:01,2007-03-13 08:00,2007-03-13 08:00,,2007-01-27 00:00,2007-01-27 00:00,,,2006-08-16 08:01,2006-08-16 08:01,,,,,PT_Normal,,,,,kE5hI0qrRn60ZYjUN2V2/w,DsZoLJb2dkKNbIs8KlKfrh,,,N,0,0,,,2007-02-01 02:42,2007-02-04 01:05,hbe4678,hbe4678,,,0
1865,12458046,14517,6816058,13330,0,100,N,N,N,CP_Units,TT_FinMile,DT_FixedDUR2,RV_OK,TK_Complete,EM03ASY272,03A P&IDs & Line List Issue - IFC,,,,0,0,0,0,0,0,0,0,,2006-10-27 17:00,2006-10-27 17:00,2007-09-02 08:00,2007-09-02 08:00,,2007-01-27 00:00,2007-01-27 00:00,,,2006-11-03 17:00,2006-11-03 17:00,,,,,PT_Normal,,,,,SAfXY0goTU+itSkIcJ46Nw,gr1caqQZLUipkMrBlclyDR,,,N,0,0,,,2007-02-01 02:42,2007-02-04 01:05,hbe4678,hbe4678,,,0
1866,12458047,14517,6816058,13330,0,100,N,N,N,CP_Units,TT_FinMile,DT_FixedDUR2,RV_OK,TK_Complete,EM03BSY272,03B P&IDs & Line List Issue - IFC,,,,0,0,0,0,0,0,0,0,,2006-11-30 08:01,2006-11-30 08:01,2008-02-02 08:01,2008-02-02 08:01,,2007-01-27 00:00,2007-01-27 00:00,,,2006-12-01 17:00,2006-12-01 17:00,,,,,PT_Normal,,,,,MKvI0M8cQjaIhzdwwGIMhA,2deB5iR6IUSIcX5h7x7Zrh,,,N,0,0,,,2007-02-01 02:42,2007-02-04 01:05,hbe4678,hbe4678,,,0
1867,12458048,14517,6816058,13330,0,100,N,N,N,CP_Units,TT_FinMile,DT_FixedDUR2,RV_OK,TK_Complete,EM03CSY272,03C P&IDs & Line List Issue - IFC,,,,0,0,0,0,0,0,0,0,,2006-07-31 00:00,2006-07-31 00:00,2007-10-30 08:00,2007-10-30 08:00,,2007-01-27 00:00,2007-01-27 00:00,,,2006-08-11 17:00,2006-08-11 17:00,,,,,PT_Normal,,,,,Wr0XOE7xRcafqAz94cOa3g,sqgpzrVg6UuS/NmwXN2iqh,,,N,0,0,,,2007-02-01 02:42,2007-02-04 01:05,hbe4678,hbe4678,,,0
1868,12458049,14517,6816058,13330,0,100,N,N,N,CP_Units,TT_FinMile,DT_FixedDUR2,RV_OK,TK_Complete,EM03DSY272,03D P&IDs & Line List Issue - IFC,,,,0,0,0,0,0,0,0,0,,2006-10-23 08:01,2006-10-23 08:01,2007-11-20 08:01,2007-11-20 08:01,,2007-01-27 00:00,2007-01-27 00:00,,,2006-10-23 08:01,2006-10-23 08:01,,,,,PT_Normal,,,,,WYhUwSi8TIe+4s3ymNlVQA,gf7JPz4IgUmxU/1BFMTmTh,,,N,0,0,,,2007-02-01 02:42,2007-02-04 01:05,hbe4678,hbe4678,,,0
1869,12458050,14517,6816058,13330,0,100,N,N,N,CP_Units,TT_FinMile,DT_FixedDUR2,RV_OK,TK_Complete,EM03ESY272,03E P&IDs & Line List Issue - IFC,,,,0,0,0,0,0,0,0,0,,2006-11-30 00:00,2006-11-30 00:00,2007-09-04 08:01,2007-09-04 08:01,,2007-01-27 00:00,2007-01-27 00:00,,,2006-11-27 17:00,2006-11-27 17:00,,,,,PT_Normal,,,,,5hMLGawjR+G/O+KIe3GjZA,AYxUGZNSqkGJktI1hAil+B,,,N,0,0,,,2007-02-01 02:42,2007-02-04 01:05,hbe4678,hbe4678,,,0
1870,12458051,14517,6816058,13330,0,100,N,N,N,CP_Units,TT_FinMile,DT_FixedDUR2,RV_OK,TK_Complete,EM03FSY272,03F P&IDs & Line List Issue - IFC,,,,0,0,0,0,0,0,0,0,,2006-10-31 00:00,2006-10-31 00:00,2007-10-27 08:01,2007-10-27 08:01,,2007-01-27 00:00,2007-01-27 00:00,,,2006-11-27 17:00,2006-11-27 17:00,,,,,PT_Normal,,,,,CSSNW0aDQXWhitJ1qIwGpw,8MFTpMHVfEmc5bfuuIRLnh,,,N,0,0,,,2007-02-01 02:42,2007-02-04 01:05,hbe4678,hbe4678,,,0
1871,12458052,14517,6816058,13330,0,100,N,N,N,CP_Units,TT_FinMile,DT_FixedDUR2,RV_OK,TK_Complete,EM03YSY272,03Y P&IDs & Line List Issue - IFC,,,,0,0,0,0,0,0,0,0,,2006-10-27 17:00,2006-10-27 17:00,2007-06-11 08:00,2007-06-11 08:00,,2007-01-27 00:00,2007-01-27 00:00,,,2006-10-27 17:00,2006-10-27 17:00,,,,,PT_Normal,,,,,ntlbpFqhTa286eeDp4Ao3A,S1GBe9sxSUORRby+WE0uHh,,,N,0,0,,,2007-02-01 02:42,2007-02-04 01:05,hbe4678,hbe4678,,,0
1872,12458053,14517,6816064,13330,1,100,N,N,N,CP_Units,TT_Task,DT_FixedDUR2,RV_OK,TK_Complete,EM03ECV167,03E Update Model Misc Fdns & Issue Dwgs - IFC,,,,0,0,0,0,40,0,0,0,,2006-12-11 08:00,2006-12-15 17:00,2007-08-18 08:00,2007-08-18 08:00,,2007-01-27 00:00,2007-01-27 00:00,,,2006-12-11 08:00,2006-12-15 17:00,,,,,PT_Normal,,,,,Ui/YRQAwSKKmmYea0C4PSQ,fQUwexAnjEKll8jmgsXkmB,,,N,0,0,,,2007-02-01 02:42,2007-02-04 01:05,hbe4678,hbe4678,,,0
1873,12458054,14517,6816064,13330,1,100,N,N,N,CP_Units,TT_Task,DT_FixedDUR2,RV_OK,TK_Complete,EM03YCV120,03Y Design & Model Major Structural Steel,,,,0,0,0,0,207.983333,0,0,0,,2006-05-17 08:01,2006-06-21 17:00,2007-03-13 08:00,2007-03-13 08:00,,2007-01-27 00:00,2007-01-27 00:00,,,2006-05-17 08:01,2006-06-21 17:00,,,,,PT_Normal,,,,,BAXCdMfXTpezL/jc/uDIgg,BQbIh7CmeUONLTLQvitpAh,,,N,0,0,,,2007-02-01 02:42,2007-02-04 01:05,hbe4678,hbe4678,,,0
1874,12458055,14517,6816064,13330,1,100,N,N,N,CP_Units,TT_Task,DT_FixedDUR2,RV_OK,TK_Complete,EM03YCV122,03Y Update Model Struct Steel & Issue Dwgs - IFC,,,,0,0,0,0,167.983333,0,0,0,,2006-09-05 08:01,2006-11-03 00:00,2007-03-13 08:00,2007-03-13 08:00,,2007-01-27 00:00,2007-01-27 00:00,,,2006-09-05 08:01,2006-10-03 17:00,,,,,PT_Normal,,,,,lGjjjWv2QeGFisbil2SJiA,uHUzpguvfkOPpt9TchEDXB,,,N,0,0,,,2007-02-01 02:42,2007-02-04 01:05,hbe4678,hbe4678,,,0
1875,12458056,14517,6816064,13330,1,100,N,N,N,CP_Units,TT_Task,DT_FixedDUR2,RV_OK,TK_Complete,EM03DCV163,03D MF302  2002-F Demineralized Water Tank - Dwgs-IFC,,,,0,0,0,0,160,0,0,0,,2006-04-17 00:00,2006-04-28 00:00,2007-05-29 08:01,2007-05-29 08:01,,2007-01-27 00:00,2007-01-27 00:00,,,2006-06-19 08:00,2006-07-14 17:00,,,,,PT_Normal,,,,,42ApzyfDTPSFPvVa8ABzkw,+h4EW2kW506LZkoI35qmix,,,N,0,0,,,2007-02-01 02:42,2007-02-04 01:05,hbe4678,hbe4678,,,0
1876,12458057,14517,6816064,13330,1,100,N,N,N,CP_Units,TT_Task,DT_FixedDUR2,RV_OK,TK_Complete,EM03ECV110,03E Design & Model Containment Area,,,,0,0,0,0,400,0,0,0,,2006-03-27 08:00,2006-07-11 17:00,2007-06-23 08:00,2007-06-23 08:00,,2007-01-27 00:00,2007-01-27 00:00,,,2006-03-27 08:00,2006-06-02 17:00,,,,,PT_Normal,,,,,Yk4Zfq17TVqxPXCz38omwg,PrVSKM1OcUq4CNIRlBV8wx,,,N,0,0,,,2007-02-01 02:42,2007-02-04 01:05,hbe4678,hbe4678,,,0
1877,12458058,14517,6816064,13330,1,100,N,N,N,CP_Units,TT_Task,DT_FixedDUR2,RV_OK,TK_Complete,EM03ECV112,03E Update Model Containment Area & Issue Dwgs-IFC,,,,0,0,0,0,248,0,0,0,,2006-07-14 08:00,2006-12-11 17:00,2007-06-23 08:00,2007-06-23 08:00,,2007-01-27 00:00,2007-01-27 00:00,,,2006-07-14 08:00,2006-08-25 17:00,,,,,PT_Normal,,,,,z1opduMxRBiCYhCyuO2I4g,pyyo84wY8kme5dZLjotEVR,,,N,0,0,,,2007-02-01 02:42,2007-02-04 01:05,hbe4678,hbe4678,,,0
1878,12458059,14517,6816064,13330,1,100,N,N,N,CP_Units,TT_Task,DT_FixedDUR2,RV_OK,TK_Complete,EM03YCV130,03Y Design & Model Structural Piperack Fdns,,,,0,0,0,0,207.983333,0,0,0,,2005-12-19 08:00,2006-01-23 17:00,2007-05-21 08:00,2007-05-21 08:00,,2007-01-27 00:00,2007-01-27 00:00,,,2005-12-19 08:00,2006-01-25 16:59,,,,,PT_Normal,,,,,/dHuX3eGTXqxZTEaiSoXIA,X4oOx+gYjk6oWpnzWCQwbx,,,N,0,0,,,2007-02-01 02:42,2007-02-04 01:05,hbe4678,hbe4678,,,0
1879,12458060,14517,6816064,13330,1,100,N,N,N,CP_Units,TT_Task,DT_FixedDUR2,RV_OK,TK_Complete,EM03YCV133,03Y Update Model Piperack Fdns & Issue Dwgs - IFC,,,,0,0,0,0,152,0,0,0,,2006-07-27 00:00,2006-10-12 00:00,2007-05-21 08:00,2007-05-21 08:00,,2007-01-27 00:00,2007-01-27 00:00,,,2006-08-01 08:00,2006-08-25 17:00,,,,,PT_Normal,,,,,75KQLHd1TfCz0+R8ie5RIw,n60pY8KP/UKPFw5ohOe3pB,,,N,0,0,,,2007-02-01 02:42,2007-02-04 01:05,hbe4678,hbe4678,,,0
1880,12458061,14517,6816064,13330,1,100,N,N,N,CP_Units,TT_Task,DT_FixedDUR2,RV_OK,TK_Complete,EM03BCV110,03B Design & Model Sumps,,,,0,0,0,0,160,0,0,0,,2006-01-30 00:00,2006-07-28 17:00,2007-12-31 08:01,2007-12-31 08:01,,2007-01-27 00:00,2007-01-27 00:00,,,2006-03-06 08:00,2006-03-31 17:00,,,,,PT_Normal,,,,,ekwAiHA1THCcauPzAjfFlw,OpidG9ZvtkG64ajOVYdlvx,,,N,0,0,,,2007-02-01 02:42,2007-02-04 01:05,hbe4678,hbe4678,,,0
1881,12458062,14517,6816064,13330,1,100,N,N,N,CP_Units,TT_Task,DT_FixedDUR2,RV_OK,TK_Complete,EM03BCV112,03B Update Model Sumps & Issue Dwgs-IFC,,,,0,0,0,0,80,0,0,0,,2006-08-04 00:00,2006-11-03 17:00,2007-12-31 08:01,2007-12-31 08:01,,2007-01-27 00:00,2007-01-27 00:00,,,2006-08-23 08:00,2006-09-05 17:00,,,,,PT_Normal,,,,,Dg/jnFAIRKa+J3jb7ZguLA,pfJYMwNzjUabQgYYBE+7RB,,,N,0,0,,,2007-02-01 02:42,2007-02-04 01:05,hbe4678,hbe4678,,,0
1882,12458063,14517,6816064,13330,1,100,N,N,N,CP_Units,TT_Task,DT_FixedDUR2,RV_OK,TK_Complete,EM03CCV110,03C Design & Model Containment Area,,,,0,0,0,0,328,0,0,0,,2005-12-19 08:00,2006-03-27 17:00,2007-10-22 17:00,2007-10-22 17:00,,2007-01-27 00:00,2007-01-27 00:00,,,2005-12-19 08:00,2006-02-15 17:00,,,,,PT_Normal,,,,,Q8BYnC7sT1+fseZ21MtsLA,OpidG9ZvtkG64ajOVYdlvx,,,N,0,0,,,2007-02-01 02:42,2007-02-04 01:05,hbe4678,hbe4678,,,0
1883,12458064,14517,6816064,13330,1,100,N,N,N,CP_Units,TT_Task,DT_FixedDUR2,RV_OK,TK_Complete,EM03BCV126,03B Conceptual Misc. Steel Design/ Model,,,,0,0,0,0,160,0,0,0,,2006-09-15 00:00,2006-10-05 17:00,2007-08-12 08:01,2007-08-12 08:01,,2007-01-27 00:00,2007-01-27 00:00,,,2006-09-11 08:00,2006-10-06 17:00,,,,,PT_Normal,,,,,/y8pxuQARIWhBcgX2PFO2w,0a5QAp9BE0iTbsGSMIbjQx,,,N,0,0,,,2007-02-01 02:42,2007-02-04 01:05,hbe4678,hbe4678,,,0
1884,12458065,14517,6816064,13330,1,100,N,N,N,CP_Units,TT_Task,DT_FixedDUR2,RV_OK,TK_Complete,EM03BCV127,03B Model Misc. Steel & Issue Dwgs - IFC,,,,0,0,0,0,40,0,0,0,2006-11-07 00:00,2006-11-07 08:00,2006-11-10 00:00,2007-08-12 08:01,2007-08-12 08:01,,2007-01-27 00:00,2007-01-27 00:00,,,2006-11-07 08:00,2006-11-13 17:00,,,,CS_MSOA,PT_Normal,,,,,Lk0fQ/ubSJyWzNQ6j3PiTw,2Ixdj+HyGEqTO2t7z21sqx,,,N,0,0,,,2007-02-01 02:42,2007-02-04 01:05,hbe4678,hbe4678,,,0
1885,12458066,14517,6816064,13330,1,100,N,N,N,CP_Units,TT_Task,DT_FixedDUR2,RV_OK,TK_Complete,EM03BCV166,03B Conceptual Misc. Foundations Design/ Model,,,,0,0,0,0,120,0,0,0,,2006-09-15 00:00,2006-10-04 17:00,2008-01-26 08:01,2008-01-26 08:01,,2007-01-27 00:00,2007-01-27 00:00,,,2006-09-11 08:00,2006-09-29 17:00,,,,,PT_Normal,,,,,DwtSnRg6SAisCDM8+5GGyg,P0pAv2Z/o0ajt24QEpneoB,,,N,0,0,,,2007-02-01 02:42,2007-02-04 01:05,hbe4678,hbe4678,,,0
1886,12458067,14517,6816064,13330,1,100,N,N,N,CP_Units,TT_Task,DT_FixedDUR2,RV_OK,TK_Complete,EM03BCV167,03B Update Model Misc Fdns & Issue Dwgs - IFC,,,,0,0,0,0,40,0,0,0,,2006-11-07 08:00,2006-11-10 00:00,2008-01-26 08:01,2008-01-26 08:01,,2007-01-27 00:00,2007-01-27 00:00,,,2006-11-07 08:00,2006-11-13 17:00,,,,,PT_Normal,,,,,Fu+kUbFtTOWEEY+rpJdJXw,gSrIof7bHU6mCCkVB74ddh,,,N,0,0,,,2007-02-01 02:42,2007-02-04 01:05,hbe4678,hbe4678,,,0
1887,12458068,14517,6816064,13330,1,100,N,N,N,CP_Units,TT_Task,DT_FixedDUR2,RV_OK,TK_Complete,EM03CCV126,03C Conceptual Misc. Steel Design/ Model,,,,0,0,0,0,160,0,0,0,,2006-05-11 08:00,2006-06-07 00:00,2007-05-08 08:00,2007-05-08 08:00,,2007-01-27 00:00,2007-01-27 00:00,,,2006-05-11 08:00,2006-06-07 17:00,,,,,PT_Normal,,,,,HWJa4mpkQxWjdhuf6GyYcA,1FXpYLqSP0SE6vl/8uje7R,,,N,0,0,,,2007-02-01 02:42,2007-02-04 01:05,hbe4678,hbe4678,,,0
1888,12458069,14517,6816064,13330,1,100,N,N,N,CP_Units,TT_Task,DT_FixedDUR2,RV_OK,TK_Complete,EM03CCV127,03C Model Misc. Steel & Issue Dwgs - IFC,,,,0,0,0,0,40,0,0,0,,2006-07-20 00:00,2006-09-04 00:00,2007-05-08 08:00,2007-05-08 08:00,,2007-01-27 00:00,2007-01-27 00:00,,,2006-07-31 08:00,2006-08-04 17:00,,,,,PT_Normal,,,,,bsqvnjYWSSCT5Xh9Suixig,XAAgjvs7Z024aDiDUWqfXR,,,N,0,0,,,2007-02-01 02:42,2007-02-04 01:05,hbe4678,hbe4678,,,0
1889,12458070,14517,6816064,13330,1,100,N,N,N,CP_Units,TT_Task,DT_FixedDUR2,RV_OK,TK_Complete,EM03CCV160,03C Design & Model Major Eq. Fdns,,,,0,0,0,0,160,0,0,0,,2005-12-19 08:00,2006-02-17 00:00,2007-05-08 08:00,2007-05-08 08:00,,2007-01-27 00:00,2007-01-27 00:00,,,2005-12-19 08:00,2006-01-17 17:00,,,,,PT_Normal,,,,,f7n+tMg9Rvi7dv5cfThF1w,0mCy4DklgUm/yp3z6nvZ6R,,,N,0,0,,,2007-02-01 02:42,2007-02-04 01:05,hbe4678,hbe4678,,,0
1890,12458071,14517,6816064,13330,1,100,N,N,N,CP_Units,TT_Task,DT_FixedDUR2,RV_OK,TK_Complete,EM03CCV164,03C Update Model Major Eq. Fdns & Issue Dwgs-IFC,,,,0,0,0,0,240,0,0,0,,2006-04-24 00:00,2006-05-12 00:00,2007-10-22 17:00,2007-10-22 17:00,,2007-01-27 00:00,2007-01-27 00:00,,,2006-05-19 08:00,2006-06-29 17:00,,,,,PT_Normal,,,,,KRk87BuvSIeU631Yr3C7kQ,sH7cfc1za0KIdmT9mItpUR,,,N,0,0,,,2007-02-01 02:42,2007-02-04 01:05,hbe4678,hbe4678,,,0
1891,12458072,14517,6816064,13330,1,100,N,N,N,CP_Units,TT_Task,DT_FixedDUR2,RV_OK,TK_Complete,EM03CCV166,03C Conceptual Misc. Foundations Design/ Model,,,,0,0,0,0,120,0,0,0,,2006-05-17 00:00,2006-06-07 00:00,2007-10-23 08:00,2007-10-23 08:00,,2007-01-27 00:00,2007-01-27 00:00,,,2006-05-18 08:00,2006-06-07 17:00,,,,,PT_Normal,,,,,Whav7+3uRleHJ3VOdHsn5g,cz4oK2b3506rfgzAyMU3lR,,,N,0,0,,,2007-02-01 02:42,2007-02-04 01:05,hbe4678,hbe4678,,,0
1892,12458073,14517,6816064,13330,1,100,N,N,N,CP_Units,TT_Task,DT_FixedDUR2,RV_OK,TK_Complete,EM03CCV167,03C Update Model Misc Fdns & Issue Dwgs - IFC,,,,0,0,0,0,40,0,0,0,,2006-07-20 00:00,2006-09-05 00:00,2007-10-23 08:00,2007-10-23 08:00,,2007-01-27 00:00,2007-01-27 00:00,,,2006-07-31 08:00,2006-08-04 17:00,,,,,PT_Normal,,,,,uUS1QU1QTLWMb1lKvnDkng,ubuXjjKOrUWC6jBlQjlUhR,,,N,0,0,,,2007-02-01 02:42,2007-02-04 01:05,hbe4678,hbe4678,,,0
1893,12458074,14517,6816064,13330,1,100,N,N,N,CP_Units,TT_Task,DT_FixedDUR2,RV_OK,TK_Complete,EM03DCV126,03D Conceptual Misc. Steel Design/ Model,,,,0,0,0,0,160,0,0,0,,2006-07-06 08:00,2006-08-04 00:00,2007-05-21 08:01,2007-05-21 08:01,,2007-01-27 00:00,2007-01-27 00:00,,,2006-07-06 08:00,2006-08-02 17:00,,,,,PT_Normal,,,,,mkEwBjUCRwWK1b6I8MVytw,2UibCfbookSrUYfPl/Z20h,,,N,0,0,,,2007-02-01 02:42,2007-02-04 01:05,hbe4678,hbe4678,,,0
1894,12458075,14517,6816064,13330,1,100,N,N,N,CP_Units,TT_Task,DT_FixedDUR2,RV_OK,TK_Complete,EM03DCV127,03D Model Misc. Steel & Issue Dwgs - IFC,,,,0,0,0,0,40,0,0,0,,2006-10-05 00:00,2006-10-21 00:00,2007-05-21 08:01,2007-05-21 08:01,,2007-01-27 00:00,2007-01-27 00:00,,,2006-10-16 08:00,2006-10-20 17:00,,,,,PT_Normal,,,,,9fwpAad6TcKBWgfD+3jDKw,1z3AXMUWx02hnxSYxDWMWx,,,N,0,0,,,2007-02-01 02:42,2007-02-04 01:05,hbe4678,hbe4678,,,0
1895,12458076,14517,6816064,13330,1,100,N,N,N,CP_Units,TT_Task,DT_FixedDUR2,RV_OK,TK_Complete,EM03DCV160,03D Design & Model Major Eq. Fdns,,,,0,0,0,0,208,0,0,0,,2005-10-24 08:00,2005-12-14 00:00,2007-05-21 08:01,2007-05-21 08:01,,2007-01-27 00:00,2007-01-27 00:00,,,2005-10-24 08:00,2005-11-28 17:00,,,,,PT_Normal,,,,,g1yUrESMQbauuBVs1wf15A,k4So9oX+SEqkpWAJ8dM07x,,,N,0,0,,,2007-02-01 02:42,2007-02-04 01:05,hbe4678,hbe4678,,,0
1896,12458077,14517,6816064,13330,1,100,N,N,N,CP_Units,TT_Task,DT_FixedDUR2,RV_OK,TK_Complete,EM03DCV164,03D Update Model Major Eq. Fdns & Issue Dwgs-IFC,,,,0,0,0,0,240,0,0,0,,2006-06-05 08:00,2006-07-27 00:00,2007-05-29 08:01,2007-05-29 08:01,,2007-01-27 00:00,2007-01-27 00:00,,,2006-06-05 08:00,2006-07-14 17:00,,,,,PT_Normal,,,,,s11AVM/dSr+aLVf+gK3axw,ihqcmL4MDk2PW6VW8Es0dB,,,N,0,0,,,2007-02-01 02:42,2007-02-04 01:05,hbe4678,hbe4678,,,0
1897,12458078,14517,6816064,13330,1,100,N,N,N,CP_Units,TT_Task,DT_FixedDUR2,RV_OK,TK_Complete,EM03DCV166,03D Conceptual Misc. Foundations Design/ Model,,,,0,0,0,0,120,0,0,0,,2006-07-18 08:00,2006-08-04 00:00,2007-10-08 08:01,2007-10-08 08:01,,2007-01-27 00:00,2007-01-27 00:00,,,2006-07-18 08:00,2006-08-07 17:00,,,,,PT_Normal,,,,,BQSvh80YQouxwNnappRdyg,hEhPpUFaE0mmWqrnxPt0/R,,,N,0,0,,,2007-02-01 02:42,2007-02-04 01:05,hbe4678,hbe4678,,,0
1898,12458079,14517,6816064,13330,1,100,N,N,N,CP_Units,TT_Task,DT_FixedDUR2,RV_OK,TK_Complete,EM03DCV167,03D Update Model Misc Fdns & Issue Dwgs - IFC,,,,0,0,0,0,40,0,0,0,,2006-10-05 00:00,2006-10-21 00:00,2007-10-08 08:01,2007-10-08 08:01,,2007-01-27 00:00,2007-01-27 00:00,,,2006-10-16 08:00,2006-10-20 17:00,,,,,PT_Normal,,,,,5C8utezbSUWq+fQw2GwVUg,nJYaIqZCgkargXdmjWJfPx,,,N,0,0,,,2007-02-01 02:42,2007-02-04 01:05,hbe4678,hbe4678,,,0
1899,12458080,14517,6816064,13330,1,100,N,N,N,CP_Units,TT_Task,DT_FixedDUR2,RV_OK,TK_Complete,EM03ECV126,03E Conceptual Misc. Steel Design/ Model,,,,0,0,0,0,160,0,0,0,,2006-09-18 08:00,2006-11-24 00:00,2007-04-04 08:01,2007-04-04 08:01,,2007-01-27 00:00,2007-01-27 00:00,,,2006-09-18 08:00,2006-10-13 17:00,,,,,PT_Normal,,,,,cpRMJxbSRmeb5j6PfF4z4A,kj4XIkNpKUWo+ZorGHkezB,,,N,0,0,,,2007-02-01 02:42,2007-02-04 01:05,hbe4678,hbe4678,,,0
1900,12458081,14517,6816064,13330,1,100,N,N,N,CP_Units,TT_Task,DT_FixedDUR2,RV_OK,TK_Complete,EM03ECV127,03E Model Misc. Steel & Issue Dwgs - IFC,,,,0,0,0,0,40,0,0,0,,2006-12-11 08:00,2006-12-15 17:00,2007-04-04 08:01,2007-04-04 08:01,,2007-01-27 00:00,2007-01-27 00:00,,,2006-12-11 08:00,2006-12-15 17:00,,,,,PT_Normal,,,,,RNC65XLhR7mj9bnVaw9LMw,yowQofj+3ki2uZiEb3Gnix,,,N,0,0,,,2007-02-01 02:42,2007-02-04 01:05,hbe4678,hbe4678,,,0
1901,12458082,14517,6816064,13330,1,100,N,N,N,CP_Units,TT_Task,DT_FixedDUR2,RV_OK,TK_Complete,EM03ECV160,03E Design & Model Major Eq. Fdns,,,,0,0,0,0,208,0,0,0,,2006-06-26 08:00,2006-09-04 17:00,2007-06-23 08:00,2007-06-23 08:00,,2007-01-27 00:00,2007-01-27 00:00,,,2006-06-26 08:00,2006-07-31 17:00,,,,,PT_Normal,,,,,0I3of/ydSryhYHb0Ap6Mog,9YJPC3Rg106tFxV01FBRAh,,,N,0,0,,,2007-02-01 02:42,2007-02-04 01:05,hbe4678,hbe4678,,,0
1902,12458083,14517,6816064,13330,1,100,N,N,N,CP_Units,TT_Task,DT_FixedDUR2,RV_OK,TK_Complete,EM03ECV164,03E Update Model Major Eq. Fdns & Issue Dwgs-IFC,,,,0,0,0,0,80,0,0,0,2006-09-25 00:00,2006-09-25 00:00,2006-10-06 00:00,2007-06-23 08:00,2007-06-23 08:00,,2007-01-27 00:00,2007-01-27 00:00,,,2006-10-03 08:00,2006-10-16 17:00,,,,CS_MSOA,PT_Normal,,,,,WnJTKc2VSWCGc4V34Kg1kg,+h4EW2kW506LZkoI35qmix,,,N,0,0,,,2007-02-01 02:42,2007-02-04 01:05,hbe4678,hbe4678,,,0
1903,12458084,14517,6816064,13330,1,100,N,N,N,CP_Units,TT_Task,DT_FixedDUR2,RV_OK,TK_Complete,EM03ECV166,03E Conceptual Misc. Foundations Design/ Model,,,,0,0,0,0,120,0,0,0,,2006-09-19 08:00,2006-11-24 00:00,2007-08-18 08:00,2007-08-18 08:00,,2007-01-27 00:00,2007-01-27 00:00,,,2006-09-19 08:00,2006-10-09 17:00,,,,,PT_Normal,,,,,S4bvmBniTmeXmS9ZWk2dkg,1VkPLudpkE6luaBcW6EIBB,,,N,0,0,,,2007-02-01 02:42,2007-02-04 01:05,hbe4678,hbe4678,,,0
1904,12458085,14517,6816064,13330,1,100,N,N,N,CP_Units,TT_Task,DT_FixedDUR2,RV_OK,TK_Complete,EM03FCV160,03F Design & Model Major Eq. Fdns,,,,0,0,0,0,168,0,0,0,,2006-02-07 00:00,2006-06-12 17:00,2007-05-07 08:00,2007-05-07 08:00,,2007-01-27 00:00,2007-01-27 00:00,,,2006-04-04 08:00,2006-05-02 17:00,,,,,PT_Normal,,,,,vD+fZAIPR3+PO3TVkHT4Bg,Bd9ctq93IE67H9kGKiFORB,,,N,0,0,,,2007-02-01 02:42,2007-02-04 01:05,hbe4678,hbe4678,,,0
1905,12458086,14517,6816064,13330,1,100,N,N,N,CP_Units,TT_Task,DT_FixedDUR2,RV_OK,TK_Complete,EM03FCV164,03F Update Model Major Eq. Fdns & Issue Dwgs-IFC,,,,0,0,0,0,80,0,0,0,,2006-06-09 00:00,2006-07-31 17:00,2007-07-31 08:01,2007-07-31 08:01,,2007-01-27 00:00,2007-01-27 00:00,,,2006-07-10 08:00,2006-07-21 17:00,,,,,PT_Normal,,,,,aaQ7q5m0S6K5+AJ2Nuq51g,bJ+4Y59nTk2xk7RLBWzkNx,,,N,0,0,,,2007-02-01 02:42,2007-02-04 01:05,hbe4678,hbe4678,,,0
1906,12458087,14517,6816064,13330,1,100,N,N,N,CP_Units,TT_Task,DT_FixedDUR2,RV_OK,TK_Complete,EM03FCV166,03F Conceptual Misc. Foundations Design/ Model,,,,0,0,0,0,120,0,0,0,,2006-08-21 08:00,2006-09-15 00:00,2007-09-24 08:01,2007-09-24 08:01,,2007-01-27 00:00,2007-01-27 00:00,,,2006-08-21 08:00,2006-09-08 17:00,,,,,PT_Normal,,,,,YawCrz7ATSmQvsFRfHFDTA,B380KQS+qEWKQWxsNkrIFR,,,N,0,0,,,2007-02-01 02:42,2007-02-04 01:05,hbe4678,hbe4678,,,0
1907,12458088,14517,6816064,13330,1,100,N,N,N,CP_Units,TT_Task,DT_FixedDUR2,RV_OK,TK_Complete,EM03FCV167,03F Update Model Misc Fdns & Issue Dwgs - IFC,,,,0,0,0,0,40,0,0,0,,2006-12-11 08:00,2006-12-20 17:00,2007-09-24 08:01,2007-09-24 08:01,,2007-01-27 00:00,2007-01-27 00:00,,,2006-12-11 08:00,2006-12-15 17:00,,,,,PT_Normal,,,,,dkNUhF8dQlyD5Drh1FUYdg,QGWP968/j0mo/PXovJaSex,,,N,0,0,,,2007-02-01 02:42,2007-02-04 01:05,hbe4678,hbe4678,,,0
1908,12458089,14517,6816064,13330,1,100,N,N,N,CP_Units,TT_Task,DT_FixedDUR2,RV_OK,TK_Complete,EM03FCV126,03F Conceptual Misc. Steel Design/ Model,,,,0,0,0,0,160,0,0,0,,2006-08-28 08:00,2006-11-24 00:00,2007-05-10 08:01,2007-05-10 08:01,,2007-01-27 00:00,2007-01-27 00:00,,,2006-08-28 08:00,2006-09-22 17:00,,,,,PT_Normal,,,,,TpXPNPeqQD+75Q/r8QYp6w,05mSYDtNEUi/ZGGsUdryKR,,,N,0,0,,,2007-02-01 02:42,2007-02-04 01:05,hbe4678,hbe4678,,,0
1909,12458090,14517,6816064,13330,1,100,N,N,N,CP_Units,TT_Task,DT_FixedDUR2,RV_OK,TK_Complete,EM03FCV127,03F Model Misc. Steel & Issue Dwgs - IFC,,,,0,0,0,0,40,0,0,0,2006-12-06 08:00,2006-12-11 08:00,2006-12-20 17:00,2007-05-10 08:01,2007-05-10 08:01,,2007-01-27 00:00,2007-01-27 00:00,,,2006-12-11 08:00,2006-12-15 17:00,,,,CS_MSOA,PT_Normal,,,,,vLT2GO9lSW2z9VJuyGb4wQ,WhUzejJDXUG/etxAmJ8uhh,,,N,0,0,,,2007-02-01 02:42,2007-02-04 01:05,hbe4678,hbe4678,,,0
1910,12458091,14517,6816064,13330,1,100,N,N,N,CP_Units,TT_Task,DT_FixedDUR2,RV_OK,TK_Complete,EM03ACV126,03A Conceptual Misc. Steel Design/ Model,,,,0,0,0,0,160,0,0,0,2006-09-18 08:00,2006-09-25 08:00,2006-11-10 00:00,2007-04-02 08:00,2007-04-02 08:00,,2007-01-27 00:00,2007-01-27 00:00,,,2006-09-25 08:00,2006-10-20 17:00,,,,CS_MSOA,PT_Normal,,,,,fUXACH5NT3CclcJ3hnT9HQ,0a5QAp9BE0iTbsGSMIbjQx,,,N,0,0,,,2007-02-01 02:42,2007-02-04 01:05,hbe4678,hbe4678,,,0
1911,12458092,14517,6816064,13330,1,100,N,N,N,CP_Units,TT_Task,DT_FixedDUR2,RV_OK,TK_Complete,EM03ACV127,03A Model Misc. Steel & Issue Dwgs - IFC,,,,0,0,0,0,40,0,0,0,,2006-11-15 08:00,2006-11-21 17:00,2007-04-02 08:00,2007-04-02 08:00,,2007-01-27 00:00,2007-01-27 00:00,,,2006-11-15 08:00,2006-11-21 17:00,,,,,PT_Normal,,,,,qehR4EiITAKGfGBVIF/knQ,2Ixdj+HyGEqTO2t7z21sqx,,,N,0,0,,,2007-02-01 02:42,2007-02-04 01:05,hbe4678,hbe4678,,,0
1912,12458093,14517,6816064,13330,1,100,N,N,N,CP_Units,TT_Task,DT_FixedDUR2,RV_OK,TK_Complete,EM03ACV160,03A Design & Model Major Eq. Fdns,,,,0,0,0,0,207.983333,0,0,0,,2006-08-01 00:00,2006-09-29 17:00,2007-04-02 08:00,2007-04-02 08:00,,2007-01-27 00:00,2007-01-27 00:00,,,2006-08-04 08:00,2006-09-08 16:59,,,,,PT_Normal,,,,,75Wxq6jyS3aa4P1OzyDlmQ,xNujRsbAlUieDWfGTDgmGB,,,N,0,0,,,2007-02-01 02:42,2007-02-04 01:05,hbe4678,hbe4678,,,0
1913,12458094,14517,6816064,13330,1,100,N,N,N,CP_Units,TT_Task,DT_FixedDUR2,RV_OK,TK_Complete,EM03ACV164,03A Update Model Major Eq. Fdns & Issue Dwgs-IFC,,,,0,0,0,0,191.983333,0,0,0,,2006-08-21 00:00,2006-10-06 17:00,2007-07-26 08:00,2007-07-26 08:00,,2007-01-27 00:00,2007-01-27 00:00,,,2006-09-11 08:00,2006-10-12 16:59,,,,,PT_Normal,,,,,onWqPMXgTCudSWxIkjfTxA,CcEtdzWdR0SYk20VqpIx4h,,,N,0,0,,,2007-02-01 02:42,2007-02-04 01:05,hbe4678,hbe4678,,,0
1914,12458095,14517,6816064,13330,1,100,N,N,N,CP_Units,TT_Task,DT_FixedDUR2,RV_OK,TK_Complete,EM03ACV166,03A Conceptual Misc. Foundations Design/ Model,,,,0,0,0,0,120,0,0,0,,2006-09-25 08:00,2006-11-21 00:00,2007-08-26 08:00,2007-08-26 08:00,,2007-01-27 00:00,2007-01-27 00:00,,,2006-09-25 08:00,2006-10-13 17:00,,,,,PT_Normal,,,,,7DjOR7dhRMmQ10duFAwQ4A,P0pAv2Z/o0ajt24QEpneoB,,,N,0,0,,,2007-02-01 02:42,2007-02-04 01:05,hbe4678,hbe4678,,,0
1915,12458096,14517,6816064,13330,1,100,N,N,N,CP_Units,TT_Task,DT_FixedDUR2,RV_OK,TK_Complete,EM03ACV167,03A Update Model Misc Fdns & Issue Dwgs - IFC,,,,0,0,0,0,40,0,0,0,,2006-11-15 00:00,2006-11-21 00:00,2007-08-26 08:00,2007-08-26 08:00,,2007-01-27 00:00,2007-01-27 00:00,,,2006-12-27 08:00,2007-01-02 17:00,,,,,PT_Normal,,,,,OHekKKDdRTapLnTASL9kjg,gSrIof7bHU6mCCkVB74ddh,,,N,0,0,,,2007-02-01 02:42,2007-02-04 01:05,hbe4678,hbe4678,,,0
1916,12458097,14517,6816065,13330,1,100,N,N,N,CP_Units,TT_Task,DT_FixedDUR2,RV_OK,TK_Complete,EM03FEL120,03F Electrical Conceptual Layouts,,,,0,0,0,0,320,0,0,0,,2005-09-19 00:00,2005-11-22 08:00,2007-03-13 08:00,2007-03-13 08:00,,2007-01-27 00:00,2007-01-27 00:00,,,2005-10-10 08:00,2005-12-02 17:00,,,,,PT_Normal,,,,,fkuxuJXVS42J7wjAqSzCnQ,bnXqnE3Y1U6XU+AWV217Ax,,,N,0,0,,,2007-02-01 02:42,2007-02-04 01:05,hbe4678,hbe4678,,,0
1917,12458098,14517,6816065,13330,1,100,N,N,N,CP_Units,TT_Task,DT_FixedDUR2,RV_OK,TK_Complete,EM03AEL120,03A Electrical Conceptual Layouts,,,,0,0,0,0,320,0,0,0,,2005-08-23 00:00,2005-10-27 17:00,2007-03-13 08:00,2007-03-13 08:00,,2007-01-27 00:00,2007-01-27 00:00,,,2005-09-02 08:01,2005-10-28 08:01,,,,,PT_Normal,,,,,IYW7L+HgRZmcDPBZIOysxA,G7J/+b6KEECNaZjDiaOULR,,,N,0,0,,,2007-02-01 02:42,2007-02-04 01:05,hbe4678,hbe4678,,,0
1918,12458099,14517,6816065,13330,1,100,N,N,N,CP_Units,TT_Task,DT_FixedDUR2,RV_OK,TK_Complete,EM03BEL120,03B Electrical Conceptual Layouts,,,,0,0,0,0,320,0,0,0,,2005-09-12 00:00,2005-11-18 17:00,2007-05-07 08:00,2007-05-07 08:00,,2007-01-27 00:00,2007-01-27 00:00,,,2005-09-26 08:00,2005-11-18 17:00,,,,,PT_Normal,,,,,Y0DtDBQFTQKMHXP/3sUVqg,G7J/+b6KEECNaZjDiaOULR,,,N,0,0,,,2007-02-01 02:42,2007-02-04 01:05,hbe4678,hbe4678,,,0
1919,12458100,14517,6816065,13330,1,100,N,N,N,CP_Units,TT_Task,DT_FixedDUR2,RV_OK,TK_Complete,EM03CEL120,03C Electrical Conceptual Layouts,,,,0,0,0,0,280,0,0,0,,2005-10-31 08:00,2005-12-07 00:00,2007-03-13 08:00,2007-03-13 08:00,,2007-01-27 00:00,2007-01-27 00:00,,,2005-10-31 08:00,2005-12-16 17:00,,,,,PT_Normal,,,,,9GKMwSJeQYeEfZnodN5jQw,DLuX1m1EfEazmqdHod2BDh,,,N,0,0,,,2007-02-01 02:42,2007-02-04 01:05,hbe4678,hbe4678,,,0
1920,12458101,14517,6816065,13330,1,100,N,N,N,CP_Units,TT_Task,DT_FixedDUR2,RV_OK,TK_Complete,EM03DEL120,03D Electrical Conceptual Layouts,,,,0,0,0,0,320,0,0,0,,2005-09-09 00:00,2005-11-18 17:00,2007-03-13 08:00,2007-03-13 08:00,,2007-01-27 00:00,2007-01-27 00:00,,,2005-10-03 08:00,2005-11-25 17:00,,,,,PT_Normal,,,,,QpyKTWbtTqaBEIdc4bZzlQ,qK/jZdl8T0GTC7D8GkqMCB,,,N,0,0,,,2007-02-01 02:42,2007-02-04 01:05,hbe4678,hbe4678,,,0
1921,12458102,14517,6816065,13330,1,100,N,N,N,CP_Units,TT_Task,DT_FixedDUR2,RV_OK,TK_Complete,EM03EEL120,03E Electrical Conceptual Layouts,,,,0,0,0,0,200,0,0,0,,2005-08-01 00:00,2006-03-31 17:00,2007-04-04 08:01,2007-04-04 08:01,,2007-01-27 00:00,2007-01-27 00:00,,,2006-03-06 08:00,2006-04-07 17:00,,,,,PT_Normal,,,,,JxikGTqMTP+HmC954p0eZw,6y+cfE8EDUWdeSkWFrsYzx,,,N,0,0,,,2007-02-01 02:42,2007-02-04 01:05,hbe4678,hbe4678,,,0
1922,12458103,14517,6816065,13330,1,100,N,N,N,CP_Units,TT_Task,DT_FixedDUR2,RV_OK,TK_Complete,EM03YEL120,03Y Electrical Conceptual Layouts,,,,0,0,0,0,320,0,0,0,,2005-09-19 00:00,2005-11-10 17:00,2007-03-13 08:00,2007-03-13 08:00,,2007-01-27 00:00,2007-01-27 00:00,,,2005-10-10 08:00,2005-12-02 17:00,,,,,PT_Normal,,,,,4b9KLZ0NRQaHA0V5ENEESw,Cd8y+zsuHkee1WZwxYGUMR,,,N,0,0,,,2007-02-01 02:42,2007-02-04 01:05,hbe4678,hbe4678,,,0
1923,12458104,14517,6816069,13330,1,100,N,N,N,CP_Units,TT_Task,DT_FixedDUR2,RV_OK,TK_Complete,EM000CV164,"Issue Anchor Bolts,Rebar, & Misc. Fnd Matl. Take-Off's to OCI",,,,0,0,0,0,120,0,0,0,,2005-10-31 08:00,2005-11-29 00:00,2007-02-27 08:00,2007-02-27 08:00,,2007-01-27 00:00,2007-01-27 00:00,,,2005-10-31 08:00,2005-11-18 17:00,,,,,PT_Normal,,,,,dLDM/s6kTwikrLqCfqqnpQ,Klg0WlmuDEeatt6OwxhWJx,,,N,0,0,,,2007-02-01 02:42,2007-02-04 01:05,hbe4678,hbe4678,,,0
1924,12458105,14517,6816070,4047,1,100,N,N,N,CP_Drtn,TT_Task,DT_FixedDUR2,RV_OK,TK_Complete,EM000ELEL2,"01,03,04,05 Electrical Routing Plans",,,,0,0,0,0,800,0,0,0,,2006-09-14 08:00,2006-12-15 17:00,2008-03-18 08:01,2008-03-18 08:01,,2007-01-27 00:00,2007-01-27 00:00,,,2006-09-14 08:00,2007-01-31 17:00,,,,,PT_Normal,,,,,ZA/cJrwQTXmcRcTL0I6H6g,IhyDKnHyO0ikukfnqhp5XA,,,N,0,0,,,2007-02-01 02:42,2007-02-04 01:05,hbe4678,hbe4678,,,0
1925,12458106,14517,6816070,4047,1,100,N,N,N,CP_Drtn,TT_Task,DT_FixedDUR2,RV_OK,TK_Complete,EM000ELEH2,"01,03,05 Develop & Issue Earthing / Grounding Dwgs - IFC",,,,0,0,0,0,496,0,0,0,,2006-05-01 00:00,2006-12-15 00:00,2007-07-02 08:00,2007-07-02 08:00,,2007-01-27 00:00,2007-01-27 00:00,,,2006-07-07 08:00,2006-10-02 17:00,,,,,PT_Normal,,,,,7HX+FcxySli78FOEF8Yf5g,,,,N,0,0,,,2007-02-01 02:42,2007-02-04 01:05,hbe4678,hbe4678,,,0
1926,12458107,14517,6816070,4047,1,100,N,N,N,CP_Drtn,TT_Task,DT_FixedDUR2,RV_OK,TK_Complete,EM000ELEJ2,"01,03,05 Develop & Issue Lighting Plans - IFC",,,,0,0,0,0,960,0,0,0,,2006-10-16 08:00,2006-11-30 17:00,2007-11-20 08:01,2007-11-20 08:01,,2007-01-27 00:00,2007-01-27 00:00,,,2006-10-16 08:00,2007-03-30 17:00,,,,,PT_Normal,,,,,brBbFwh+RdW0ps1f7exyCg,,,,N,0,0,,,2007-02-01 02:42,2007-02-04 01:05,hbe4678,hbe4678,,,0
1927,12458108,14517,6816070,4047,1,100,N,N,N,CP_Drtn,TT_Task,DT_FixedDUR2,RV_OK,TK_Complete,EM000ELEM2,Dev/Issue Elect Cable/Raceway Sched  IFC,,,,0,0,0,0,0,0,0,0,,2006-12-04 08:00,2007-01-31 17:00,2007-05-07 08:00,2007-05-07 08:00,,2007-01-27 00:00,2007-01-27 00:00,,,2006-12-04 08:00,2006-12-04 08:00,,,,,PT_Normal,,,,,Fcv/Z9wERYCKZezLhVXhPA,,,,N,0,0,,,2007-02-01 02:42,2007-02-04 01:05,hbe4678,hbe4678,,,0
1928,12458109,14517,6816070,4047,1,100,N,N,N,CP_Drtn,TT_Task,DT_FixedDUR2,RV_OK,TK_Complete,EM000ELEK2,"01,03,04,05 Develop & Issue Power Plans - IFC",,,,0,0,0,0,400,0,0,0,,2006-07-06 00:00,2006-12-28 17:00,2007-05-07 08:00,2007-05-07 08:00,,2007-01-27 00:00,2007-01-27 00:00,,,2006-08-21 08:00,2006-10-27 17:00,,,,,PT_Normal,,,,,4PBuuXdpR12rJEjCqhyMtA,,,,N,0,0,,,2007-02-01 02:42,2007-02-04 01:05,hbe4678,hbe4678,,,0
1929,12458110,14517,6816070,4047,1,0,N,N,N,CP_Drtn,TT_Task,DT_FixedDUR2,RV_OK,TK_Active,EM000ELEN3,"01,03 Equipment Interconnection Diagrams",,4088,0,192,0,0,0,960,0,0,0,,2006-10-27 08:00,,2009-01-13 08:00,2009-02-13 17:00,,2007-01-29 08:00,2007-03-01 17:00,2007-01-29 08:00,2007-03-01 17:00,2006-10-27 08:00,2007-04-12 17:00,,2009-01-13 08:00,2009-02-13 17:00,,PT_Normal,,,,,BERSmB0GRD2lGX7np1/kvA,,,,N,0,0,,,2007-02-01 02:42,2007-02-03 00:30,hbe4678,hbe4678,2007-01-29 08:00,2007-03-01 17:00,192
1930,12458111,14517,6816070,4047,1,100,N,N,N,CP_Drtn,TT_Task,DT_FixedDUR2,RV_OK,TK_Complete,EK100ELEK2,"01,03,04,05 Develop & Issue Cable Ladder Plans - IFC Except 01H & 05A",,,,0,0,0,0,640,0,0,0,,2006-07-06 00:00,2006-09-29 00:00,2007-05-07 08:00,2007-05-07 08:00,,2007-01-27 00:00,2007-01-27 00:00,,,2006-08-21 08:00,2006-12-08 17:00,,,,,PT_Normal,,,,,YNeavsBZTOGZL7yC94LxYg,b49bAW7O20KiRSwz8VhFZA,,,N,0,0,,,2007-02-01 02:42,2007-02-04 01:05,hbe4678,hbe4678,,,0
1931,12458112,14517,6816070,4047,1,100,N,N,N,CP_Drtn,TT_Task,DT_FixedDUR2,RV_OK,TK_Complete,EK200ELEK2,01H Develop & Issue Cable Ladder Plans - IFC,,,,0,0,0,0,640,0,0,0,2006-10-02 08:00,2006-11-15 08:00,2007-01-22 00:00,2007-05-07 08:00,2007-05-07 08:00,,2007-01-27 00:00,2007-01-27 00:00,,,2006-11-15 08:00,2007-03-06 17:00,,,,CS_MSOA,PT_Normal,,,,,JWCP0YCFQLOMPHrY6gbtgg,PkPJhV6ek0mWaaERAVpoVw,,,N,0,0,,,2007-02-01 02:42,2007-02-04 01:05,hbe4678,hbe4678,,,0
1932,12458113,14517,6816074,13330,1,100,N,N,N,CP_Units,TT_Task,DT_FixedDUR2,RV_OK,TK_Complete,EM020IC128,Instrument Wiring Diagrams - IFC,,,,0,0,0,0,1128,0,0,0,,2006-05-01 08:00,2006-12-18 00:00,2007-07-09 08:00,2007-07-09 08:00,,2007-01-27 00:00,2007-01-27 00:00,,,2006-05-01 08:00,2006-11-13 17:00,,,,,PT_Normal,,,,,NI5W2QJlSYqh7cs14icSGw,,,,N,0,0,,,2007-02-01 02:42,2007-02-04 01:05,hbe4678,hbe4678,,,0
1933,12458114,14517,6816074,13330,1,100,N,N,N,CP_Units,TT_Task,DT_FixedDUR2,RV_OK,TK_Complete,EM020IC129,Instrument Loop Diagrams - IFC,,,,0,0,0,0,632,0,0,0,,2006-08-15 08:00,2007-01-15 00:00,2009-02-15 08:01,2009-02-15 08:01,,2007-01-27 00:00,2007-01-27 00:00,,,2006-08-15 08:00,2006-12-01 17:00,,,,,PT_Normal,,,,,zMTaRJ1mRZWM4taIyNuf7Q,,,,N,0,0,,,2007-02-01 02:42,2007-02-04 01:05,hbe4678,hbe4678,,,0
1934,12458115,14517,6816074,13331,1,100,N,N,N,CP_Phys,TT_Task,DT_FixedDUR2,RV_OK,TK_Complete,EM020IC127,Instrument Installation Details (10%) - IFC,,,,0,0,0,0,320,0,0,0,,2006-06-19 08:00,2006-07-17 17:00,2007-07-09 08:00,2007-07-09 08:00,,2007-01-27 00:00,2007-01-27 00:00,,,2006-06-19 08:00,2006-08-11 17:00,,,,,PT_Normal,,,,,HDH2gTyCSVOblGSgmomI0A,NEelM3OLiEq7DKTZd0WrBx,,,N,0,0,,,2007-02-01 02:42,2007-02-04 01:05,hbe4678,hbe4678,,,0
1935,12458116,14517,6816074,13330,1,100,N,N,N,CP_Units,TT_Task,DT_FixedDUR2,RV_OK,TK_Complete,EM010IC123,UNIT 01 Instr. Location Plans - IFC,,,,0,0,0,0,816,0,0,0,,2006-05-01 08:00,2006-12-08 17:00,2007-09-02 08:00,2007-09-02 08:00,,2007-01-27 00:00,2007-01-27 00:00,,,2006-05-01 08:00,2006-09-19 17:00,,,,,PT_Normal,,,,,ov5YInMxS5ScIZQ9CuiTaA,2s/BjdRjrEq0OIFVRxFQUx,,,N,0,0,,,2007-02-01 02:42,2007-02-04 01:05,hbe4678,hbe4678,,,0
1936,12458117,14517,6816074,13330,1,100,N,N,N,CP_Units,TT_Task,DT_FixedDUR2,RV_OK,TK_Complete,EM020IC124,UNIT 02 Instr. Location Plans - IFC,,,,0,0,0,0,920,0,0,0,,2006-05-01 08:00,2006-11-10 17:00,2007-07-09 08:00,2007-07-09 08:00,,2007-01-27 00:00,2007-01-27 00:00,,,2006-05-01 08:00,2006-10-06 17:00,,,,,PT_Normal,,,,,8UnWFMPDSo6afvRXPOz9Sw,2s/BjdRjrEq0OIFVRxFQUx,,,N,0,0,,,2007-02-01 02:42,2007-02-04 01:05,hbe4678,hbe4678,,,0
1937,12458118,14517,6816074,13330,1,100,N,N,N,CP_Units,TT_Task,DT_FixedDUR2,RV_OK,TK_Complete,EM030IC125,UNIT 03 Instr. Location Plans - IFC,,,,0,0,0,0,1144,0,0,0,,2006-05-01 08:00,2006-11-22 17:00,2007-07-23 08:00,2007-07-23 08:00,,2007-01-27 00:00,2007-01-27 00:00,,,2006-05-01 08:00,2006-11-15 17:00,,,,,PT_Normal,,,,,Y6X7usZVQTaS6BE9jaOZGw,2s/BjdRjrEq0OIFVRxFQUx,,,N,0,0,,,2007-02-01 02:42,2007-02-04 01:05,hbe4678,hbe4678,,,0
1938,12458119,14517,6816074,13330,1,0,N,N,N,CP_Units,TT_Task,DT_FixedDUR2,RV_OK,TK_Active,EM050IC130,05B Instr. Location Plans - IFC,,1328.01666666667,0,112,0,0,0,1080,0,0,0,,2006-05-01 08:00,,2007-09-18 08:01,2007-10-08 08:01,2007-02-15 17:00,2007-01-29 08:00,2007-02-15 17:00,2007-01-29 08:00,2007-02-15 17:00,2006-05-01 08:00,2006-11-03 17:00,,2007-09-18 08:01,2007-10-08 08:01,,PT_Normal,,,,,92zE1iZITpe+ijGG3dwvDw,2s/BjdRjrEq0OIFVRxFQUx,,,N,0,0,,,2007-02-01 02:42,2007-02-04 01:00,hbe4678,hbe4678,2007-01-29 08:00,2007-02-15 17:00,112
1939,12458120,14517,6816074,13330,1,100,N,N,N,CP_Units,TT_Task,DT_FixedDUR2,RV_OK,TK_Active,EK020IC131,Instrument Loop Diagrams FF - IFC,,4240,120,40,0,0,0,632,0,0,0,,2006-07-03 08:00,,2009-02-09 08:00,2009-02-13 17:00,,2007-01-29 08:00,2007-02-02 17:00,2007-01-29 08:00,2007-02-02 17:00,2006-07-03 08:00,2006-10-19 17:00,,2009-02-09 08:00,2009-02-13 17:00,,PT_Normal,,,,,y4oC6ZhES0a1eAwwiy5GjA,oP6J+qiAkUWWLxCUSkA+0B,,,N,0,0,,,2007-02-01 02:42,2007-02-01 02:43,hbe4678,hbe4678,2007-01-29 08:00,2007-02-02 17:00,40
1940,12458121,14517,6816074,13330,1,100,N,N,N,CP_Units,TT_Task,DT_FixedDUR2,RV_OK,TK_Complete,EM020IC132,Traditional J-boxes Wiring Reports - IFC,,,,0,0,0,0,312,0,0,0,,2006-06-19 08:00,2006-08-07 17:00,2009-02-13 17:00,2009-02-13 17:00,,2007-01-27 00:00,2007-01-27 00:00,,,2006-06-19 08:00,2006-08-10 17:00,,,,,PT_Normal,,,,,2qdDeQ/7SNCKQ+UurORy4A,/3q1TPsDkkmg7pGZqYQ//R,,,N,0,0,,,2007-02-01 02:42,2007-02-04 01:05,hbe4678,hbe4678,,,0
1941,12458122,14517,6816074,13330,1,100,N,N,N,CP_Units,TT_Task,DT_FixedDUR2,RV_OK,TK_Complete,EM020IC134,DCS Marshalling Report - IFC,,,,0,0,0,0,344,0,0,0,,2006-07-03 08:00,2006-08-07 17:00,2009-02-13 17:00,2009-02-13 17:00,,2007-01-27 00:00,2007-01-27 00:00,,,2006-07-03 08:00,2006-08-30 17:00,,,,,PT_Normal,,,,,lT/mNQ/sTC+N7/otjckCYA,/3q1TPsDkkmg7pGZqYQ//R,,,N,0,0,,,2007-02-01 02:42,2007-02-04 01:05,hbe4678,hbe4678,,,0
1942,12458123,14517,6816074,13330,1,100,N,N,N,CP_Units,TT_Task,DT_FixedDUR2,RV_OK,TK_Complete,EK020IC133,Field Bus J-boxes Wiring Reports - IFC,,,,0,0,0,0,640,0,0,0,,2006-09-04 08:00,2006-12-22 17:00,2009-02-13 17:00,2009-02-13 17:00,,2007-01-27 00:00,2007-01-27 00:00,,,2006-09-04 08:00,2006-12-22 17:00,,,,,PT_Normal,,,,,lxGYsu7KSyqWVsgA5O3SYQ,/3q1TPsDkkmg7pGZqYQ//R,,,N,0,0,,,2007-02-01 02:42,2007-02-04 01:05,hbe4678,hbe4678,,,0
1943,12458124,14517,6816074,13330,1,100,N,N,N,CP_Units,TT_Task,DT_FixedDUR2,RV_OK,TK_Complete,EM020IC135,SIS Termination Report - IFC,,,,0,0,0,0,360,0,0,0,,2006-07-03 08:00,2006-09-29 17:00,2009-02-13 17:00,2009-02-13 17:00,,2007-01-27 00:00,2007-01-27 00:00,,,2006-07-03 08:00,2006-09-01 17:00,,,,,PT_Normal,,,,,Qgr2D3THRbmlWdvxPotjbw,/3q1TPsDkkmg7pGZqYQ//R,,,N,0,0,,,2007-02-01 02:42,2007-02-04 01:05,hbe4678,hbe4678,,,0
1944,12458125,14517,6816074,13330,1,100,N,N,N,CP_Units,TT_Task,DT_FixedDUR2,RV_OK,TK_Complete,EM020IC136,ITCC Termination Report - IFC,,,,0,0,0,0,360,0,0,0,,2006-07-03 08:00,2006-09-04 17:00,2009-02-13 17:00,2009-02-13 17:00,,2007-01-27 00:00,2007-01-27 00:00,,,2006-07-03 08:00,2006-09-01 17:00,,,,,PT_Normal,,,,,3uc6JMi5TsCmJonXsegNSg,/3q1TPsDkkmg7pGZqYQ//R,,,N,0,0,,,2007-02-01 02:42,2007-02-04 01:05,hbe4678,hbe4678,,,0
1945,12458126,14517,6816074,13330,1,100,N,N,N,CP_Units,TT_Task,DT_FixedDUR2,RV_OK,TK_Complete,EM020IC137,Miscellaneous Wiring Report - IFC,,,,0,0,0,0,856,0,0,0,,2006-07-03 08:00,2006-10-30 17:00,2009-02-13 17:00,2009-02-13 17:00,,2007-01-27 00:00,2007-01-27 00:00,,,2006-07-03 08:00,2006-11-28 17:00,,,,,PT_Normal,,,,,k3DppfD6QMiIr+IW0I6QfA,/3q1TPsDkkmg7pGZqYQ//R,,,N,0,0,,,2007-02-01 02:42,2007-02-04 01:05,hbe4678,hbe4678,,,0
1946,12458127,14517,6816074,13330,1,0,N,N,N,CP_Units,TT_Task,DT_FixedDUR2,RV_OK,TK_Active,EM000IC100,Instrument Index - IFC,,4240,680,0,0,0,0,200,0,0,0,,2006-09-04 00:00,,2009-02-13 17:00,2009-02-13 17:00,,2007-02-05 08:00,2007-02-05 08:00,2007-02-05 08:00,2007-02-05 08:00,2006-09-07 08:00,2006-10-11 17:00,,2009-02-13 17:00,2009-02-13 17:00,,PT_Normal,,,,,yiojmoNsRbmhkZkrYgzOEQ,oP6J+qiAkUWWLxCUSkA+0B,,,N,0,0,,,2007-02-01 02:42,2007-02-01 02:43,hbe4678,hbe4678,2007-02-05 08:00,2007-02-05 08:00,0
1947,12458128,14517,6816074,13330,1,100,N,N,N,CP_Units,TT_Task,DT_FixedDUR2,RV_OK,TK_Complete,EM020IC126,Instrument Installation Details (90%) - IFC,,,,0,0,0,0,944,0,0,0,,2005-11-07 00:00,2006-05-19 00:00,2007-07-09 08:00,2007-07-09 08:00,,2007-01-27 00:00,2007-01-27 00:00,,,2005-11-18 08:00,2006-05-04 17:00,,,,,PT_Normal,,,,,7Z6JcAVsQEG86Fgqm4BGuA,,,,N,0,0,,,2007-02-01 02:42,2007-02-04 01:05,hbe4678,hbe4678,,,0
1948,12458129,14517,6816076,13330,1,100,N,N,N,CP_Units,TT_Task,DT_FixedDUR2,RV_OK,TK_Complete,EM000MCG10,GEN and ADMINISTRATIVE,,,,0,0,0,0,520,0,0,0,,2006-02-13 00:00,2006-09-11 08:00,2009-02-15 08:01,2009-02-15 08:01,,2007-01-27 00:00,2007-01-27 00:00,,,2006-05-15 08:00,2006-08-11 17:00,,,,,PT_Normal,,,,,jlekqVTkReKf2OW6IWchYw,,,,N,0,0,,,2007-02-01 02:42,2007-02-04 01:05,hbe4678,hbe4678,,,0
1949,12458130,14517,6816077,13330,1,100,N,N,N,CP_Units,TT_Task,DT_FixedDUR2,RV_OK,TK_Complete,EM000MD44C,Prepare & Issue Prelim. RFQ - MD404 to Proc.,,,,0,,0,,40,,,0,,2005-03-28 08:00,2005-03-30 17:00,2007-01-09 08:01,2007-01-09 08:01,,2007-01-27 00:00,2007-01-27 00:00,,,2005-03-28 08:00,2005-04-01 17:00,,,,,PT_Normal,,,,,duDrDeGHTAqjUCoqy05qFg,,,,N,,,,,2007-02-01 02:42,2007-02-04 01:05,hbe4678,hbe4678,,,0
1950,12458131,14517,6816077,13330,1,100,N,N,N,CP_Units,TT_Task,DT_FixedDUR2,RV_OK,TK_Complete,EM000MD44D,Technical Evaluation  - MD404,,,,0,0,0,0,40,0,0,0,,2005-04-22 00:00,2005-05-19 00:00,2007-01-09 08:01,2007-01-09 08:01,,2007-01-27 00:00,2007-01-27 00:00,,,2005-04-25 08:00,2005-04-29 17:00,,,,,PT_Normal,,,,,rXHlrvrUR3We2W7eaONBOQ,,,,N,0,0,,,2007-02-01 02:42,2007-02-04 01:05,hbe4678,hbe4678,,,0
1951,12458132,14517,6816077,13330,1,100,N,N,N,CP_Units,TT_Task,DT_FixedDUR2,RV_OK,TK_Complete,EM000MD44E,Prepare & Issue Purchase ERW - MD404,,,,0,0,0,0,24,0,0,0,,2005-07-04 00:00,2005-07-06 00:00,2007-04-24 08:01,2007-04-24 08:01,,2007-01-27 00:00,2007-01-27 00:00,,,2005-07-26 08:00,2005-07-28 17:00,,,,,PT_Normal,,,,,R40hOhioQ5aV61+9jALscA,,,,N,0,0,,,2007-02-01 02:42,2007-02-04 01:05,hbe4678,hbe4678,,,0
1952,12458133,14517,6816077,13330,1,100,N,N,N,CP_Units,TT_Task,DT_FixedDUR2,RV_OK,TK_Complete,EM00MD45C,Prepare & Issue Prelim. RFQ - MD405 to Proc.,,,,0,,0,,40,,,0,,2005-03-28 08:00,2005-03-30 17:00,2007-04-15 08:01,2007-04-15 08:01,,2007-01-27 00:00,2007-01-27 00:00,,,2005-03-28 08:00,2005-04-01 17:00,,,,,PT_Normal,,,,,D5YSRWgASNKUGiugUMEveQ,,,,N,,,,,2007-02-01 02:42,2007-02-04 01:05,hbe4678,hbe4678,,,0
1953,12458134,14517,6816077,13330,1,100,N,N,N,CP_Units,TT_Task,DT_FixedDUR2,RV_OK,TK_Complete,EM000MD46C,Prepare & Issue Prelim. RFQ - MD411 to Proc.,,,,0,,0,,40,,,0,,2005-03-28 08:00,2005-03-30 17:00,2007-02-07 08:01,2007-02-07 08:01,,2007-01-27 00:00,2007-01-27 00:00,,,2005-03-28 08:00,2005-04-01 17:00,,,,,PT_Normal,,,,,mYsbB59pSviaMMLKEgZ0bw,,,,N,,,,,2007-02-01 02:42,2007-02-04 01:05,hbe4678,hbe4678,,,0
1954,12458135,14517,6816077,13330,1,100,N,N,N,CP_Units,TT_Task,DT_FixedDUR2,RV_OK,TK_Complete,EM000MD42C,Prepare & Issue Prelim. RFQ - MD402 to Proc.,,,,0,,0,,40,,,0,,2005-03-14 08:00,2005-03-18 17:00,2007-01-09 08:01,2007-01-09 08:01,,2007-01-27 00:00,2007-01-27 00:00,,,2005-03-14 08:00,2005-03-18 17:00,,,,,PT_Normal,,,,,B3VjhBP+Tz6Oa6f6y/Izbw,,,,N,,,,,2007-02-01 02:42,2007-02-04 01:05,hbe4678,hbe4678,,,0
1955,12458136,14517,6816077,13330,1,100,N,N,N,CP_Units,TT_Task,DT_FixedDUR2,RV_OK,TK_Complete,EM000MD42D,Technical Evaluation  - MD402,,,,0,0,0,0,40,0,0,0,,2005-04-22 00:00,2005-05-19 00:00,2007-01-09 08:01,2007-01-09 08:01,,2007-01-27 00:00,2007-01-27 00:00,,,2005-04-25 08:00,2005-04-29 17:00,,,,,PT_Normal,,,,,/Fs+8WCcTmSk9LuJRLOKfw,,,,N,0,0,,,2007-02-01 02:42,2007-02-04 01:05,hbe4678,hbe4678,,,0
1956,12458137,14517,6816077,13330,1,100,N,N,N,CP_Units,TT_Task,DT_FixedDUR2,RV_OK,TK_Complete,EM000MD42E,Prepare & Issue Purchase ERW - MD402,,,,0,0,0,0,24,0,0,0,,2005-06-01 00:00,2005-06-03 17:00,2007-04-15 08:01,2007-04-15 08:01,,2007-01-27 00:00,2007-01-27 00:00,,,2005-06-28 08:00,2005-06-30 17:00,,,,,PT_Normal,,,,,1OJaQrUBQFSTk0XCsUB7kg,,,,N,0,0,,,2007-02-01 02:42,2007-02-04 01:05,hbe4678,hbe4678,,,0
1957,12458138,14517,6816077,13330,1,100,N,N,N,CP_Units,TT_Task,DT_FixedDUR2,RV_OK,TK_Complete,EM000MD22E,Prepare & Issue Purchase ERW - MD202,,,,0,0,0,0,24,0,0,0,,2005-07-11 00:00,2005-07-14 00:00,2007-05-07 08:00,2007-05-07 08:00,,2007-01-27 00:00,2007-01-27 00:00,,,2005-08-02 08:00,2005-08-04 17:00,,,,,PT_Normal,,,,,R5M9RG/YT1mTrM4MF1nfxw,,,,N,0,0,,,2007-02-01 02:42,2007-02-04 01:05,hbe4678,hbe4678,,,0
1958,12458139,14517,6816077,13330,1,100,N,N,N,CP_Units,TT_Task,DT_FixedDUR2,RV_OK,TK_Complete,EM000MD22D,Technical Evaluation  - MD202,,,,0,0,0,0,40,0,0,0,,2005-04-22 00:00,2005-05-19 00:00,2007-05-07 08:00,2007-05-07 08:00,,2007-01-27 00:00,2007-01-27 00:00,,,2005-04-25 08:00,2005-04-29 17:00,,,,,PT_Normal,,,,,WyIdWqkIQUqwDdiHgt9ilA,,,,N,0,0,,,2007-02-01 02:42,2007-02-04 01:05,hbe4678,hbe4678,,,0
1959,12458140,14517,6816077,13330,1,100,N,N,N,CP_Units,TT_Task,DT_FixedDUR2,RV_OK,TK_Complete,PM000MD47N,Recv. Planning V. Data MD406,,,,0,0,0,0,160,0,0,0,,2005-10-24 00:00,2005-11-09 00:00,2007-01-09 08:01,2007-01-09 08:01,,2007-01-27 00:00,2007-01-27 00:00,,,2005-11-09 08:00,2005-12-06 17:00,,,,,PT_Normal,,,,,b5IiUMcLT3imK832FeMSpw,,,,N,0,0,,,2007-02-01 02:42,2007-02-04 01:05,hbe4678,hbe4678,,,0
1960,12458141,14517,6816077,13330,1,100,N,N,N,CP_Units,TT_Task,DT_FixedDUR2,RV_OK,TK_Complete,PM000MD45N,Recv. Planning V. Data MD405,,,,0,0,0,0,160,0,0,0,,2005-09-16 00:00,2005-10-03 00:00,2007-04-15 08:01,2007-04-15 08:01,,2007-01-27 00:00,2007-01-27 00:00,,,2005-09-26 08:00,2005-10-21 17:00,,,,,PT_Normal,,,,,c62Y9WyuTTCBKIdJCmKvuA,,,,N,0,0,,,2007-02-01 02:42,2007-02-04 01:05,hbe4678,hbe4678,,,0
1961,12458142,14517,6816077,13330,1,100,N,N,N,CP_Units,TT_Task,DT_FixedDUR2,RV_OK,TK_Complete,PM000MD46N,Recv. Planning V. Data MD411,,,,0,0,0,0,160,0,0,0,,2005-09-26 08:00,2005-10-14 00:00,2007-03-05 08:00,2007-03-05 08:00,,2007-01-27 00:00,2007-01-27 00:00,,,2005-09-26 08:00,2005-10-21 17:00,,,,,PT_Normal,,,,,mtdrMJs9QAOPqlMXRADI8Q,,,,N,0,0,,,2007-02-01 02:42,2007-02-04 01:05,hbe4678,hbe4678,,,0
1962,12458143,14517,6816077,13330,1,100,N,N,N,CP_Units,TT_Task,DT_FixedDUR2,RV_OK,TK_Complete,PM000MD42N,Recv. Planning V. Data MD402,,,,0,0,0,0,160,0,0,0,,2005-09-16 00:00,2005-11-18 17:00,2007-01-09 08:01,2007-01-09 08:01,,2007-01-27 00:00,2007-01-27 00:00,,,2005-09-26 08:00,2005-10-21 17:00,,,,,PT_Normal,,,,,65XLQUPGROqeNLqA2Mr61w,,,,N,0,0,,,2007-02-01 02:42,2007-02-04 01:05,hbe4678,hbe4678,,,0
1963,12458144,14517,6816077,13330,1,100,N,N,N,CP_Units,TT_Task,DT_FixedDUR2,RV_OK,TK_Complete,PM000MD22N,Recv. Planning V. Data MD202,,,,0,0,0,0,160,0,0,0,,2005-09-16 00:00,2005-12-13 00:00,2007-05-07 08:00,2007-05-07 08:00,,2007-01-27 00:00,2007-01-27 00:00,,,2005-10-17 08:00,2005-11-11 17:00,,,,,PT_Normal,,,,,AddAJMC+RVe5vICn8UouJg,,,,N,0,0,,,2007-02-01 02:42,2007-02-04 01:05,hbe4678,hbe4678,,,0
1964,12458145,14517,6816077,13330,1,100,N,N,N,CP_Units,TT_Task,DT_FixedDUR2,RV_OK,TK_Complete,PM000MD44N,Recv. Planning V. Data MD404,,,,0,0,0,0,160,0,0,0,,2005-10-17 08:00,2005-10-31 00:00,2007-01-09 08:01,2007-01-09 08:01,,2007-01-27 00:00,2007-01-27 00:00,,,2005-10-17 08:00,2005-11-11 17:00,,,,,PT_Normal,,,,,6Sqki3vkQvmtfJJNzmKdyQ,RnGH9fyk60KpGrLs0OoTMh,,,N,0,0,,,2007-02-01 02:42,2007-02-04 01:05,hbe4678,hbe4678,,,0
1965,12458146,14517,6816077,13330,1,100,N,N,N,CP_Units,TT_Task,DT_FixedDUR2,RV_OK,TK_Complete,EM000MD22C,Prepare & Issue Prelim. RFQ - MD202 to Proc.,,,,0,,0,,40,,,0,,2005-03-28 08:00,2005-03-30 17:00,2007-01-09 08:01,2007-01-09 08:01,,2007-01-27 00:00,2007-01-27 00:00,,,2005-03-28 08:00,2005-04-01 17:00,,,,,PT_Normal,,,,,wy+zUoihTtGOdla+0IRjPg,,,,N,,,,,2007-02-01 02:42,2007-02-04 01:05,hbe4678,hbe4678,,,0
1966,12458147,14517,6816077,13330,1,100,N,N,N,CP_Units,TT_Task,DT_FixedDUR2,RV_OK,TK_Complete,EM000MD46D,Technical Evaluation  - MD411,,,,0,0,0,0,40,0,0,0,,2005-04-22 00:00,2005-05-20 00:00,2007-02-07 08:01,2007-02-07 08:01,,2007-01-27 00:00,2007-01-27 00:00,,,2005-04-25 08:00,2005-04-29 17:00,,,,,PT_Normal,,,,,kAy/MytaQuqSUUpAwGKXeQ,,,,N,0,0,,,2007-02-01 02:42,2007-02-04 01:05,hbe4678,hbe4678,,,0
1967,12458148,14517,6816077,13330,1,100,N,N,N,CP_Units,TT_Task,DT_FixedDUR2,RV_OK,TK_Complete,EM000MD46E,Prepare & Issue Purchase ERW - MD411,,,,0,0,0,0,24,0,0,0,,2005-07-04 00:00,2005-07-06 00:00,2007-05-07 08:00,2007-05-07 08:00,,2007-01-27 00:00,2007-01-27 00:00,,,2005-07-19 08:00,2005-07-21 17:00,,,,,PT_Normal,,,,,1QtN+AeYQIOO2a/mcsgM+Q,,,,N,0,0,,,2007-02-01 02:42,2007-02-04 01:05,hbe4678,hbe4678,,,0
1968,12458149,14517,6816077,13330,1,100,N,N,N,CP_Units,TT_Task,DT_FixedDUR2,RV_OK,TK_Complete,EM000MD47D,Technical Evaluation  - MD406,,,,0,0,0,0,40,0,0,0,,2005-08-01 08:00,2005-08-05 17:00,2007-01-09 08:01,2007-01-09 08:01,,2007-01-27 00:00,2007-01-27 00:00,,,2005-08-01 08:00,2005-08-05 17:00,,,,,PT_Normal,,,,,PCvJVS49RrqRyGBA507PjA,,,,N,0,0,,,2007-02-01 02:42,2007-02-04 01:05,hbe4678,hbe4678,,,0
1969,12458150,14517,6816077,13330,1,100,N,N,N,CP_Units,TT_Task,DT_FixedDUR2,RV_OK,TK_Complete,EM000MD47E,Prepare & Issue Purchase ERW - MD406,,,,0,0,0,0,32,0,0,0,,2005-09-15 08:00,2005-09-20 17:00,2007-12-09 08:01,2007-12-09 08:01,,2007-01-27 00:00,2007-01-27 00:00,,,2005-09-15 08:00,2005-09-20 17:00,,,,,PT_Normal,,,,,E4V+s3awRIuM6fMJL6BBAA,,,,N,0,0,,,2007-02-01 02:42,2007-02-04 01:05,hbe4678,hbe4678,,,0
1970,12458151,14517,6816077,13330,1,100,N,N,N,CP_Units,TT_Task,DT_FixedDUR2,RV_OK,TK_Complete,EM000MD47F,Develop & Issue Inquiry for ERW - MD406,,,,0,0,0,0,80,0,0,0,,2005-05-27 08:00,2005-06-10 17:00,2007-01-09 08:01,2007-01-09 08:01,,2007-01-27 00:00,2007-01-27 00:00,,,2005-05-27 08:00,2005-06-10 17:00,,,,,PT_Normal,,,,,Ps/6DWSCQfeBup1vS9NleQ,,,,N,0,0,,,2007-02-01 02:42,2007-02-04 01:05,hbe4678,hbe4678,,,0
1971,12458152,14517,6816077,13330,1,100,N,N,N,CP_Units,TT_Task,DT_FixedDUR2,RV_OK,TK_Complete,EM000MD45D,Technical Evaluation  - MD405,,,,0,0,0,0,40,0,0,0,,2005-04-25 08:00,2005-05-19 00:00,2007-04-15 08:01,2007-04-15 08:01,,2007-01-27 00:00,2007-01-27 00:00,,,2005-04-25 08:00,2005-04-29 17:00,,,,,PT_Normal,,,,,rvv3L82rTFSBfC85FBJpIg,,,,N,0,0,,,2007-02-01 02:42,2007-02-04 01:05,hbe4678,hbe4678,,,0
1972,12458153,14517,6816077,13330,1,100,N,N,N,CP_Units,TT_Task,DT_FixedDUR2,RV_OK,TK_Complete,EM000MD45E,Prepare & Issue Purchase ERW - MD405,,,,0,0,0,0,24,0,0,0,,2005-07-04 00:00,2005-07-06 00:00,2007-08-23 08:01,2007-08-23 08:01,,2007-01-27 00:00,2007-01-27 00:00,,,2005-07-26 08:00,2005-07-28 17:00,,,,,PT_Normal,,,,,8S0NzaTlQIS2PFU22/2eww,,,,N,0,0,,,2007-02-01 02:42,2007-02-04 01:05,hbe4678,hbe4678,,,0
1973,12458154,14517,6816079,13331,1,100,N,N,N,CP_Units,TT_Task,DT_FixedDUR2,RV_OK,TK_Complete,EM000PI025,Develop Piping Specs (PDS),,,,0,0,0,,600,,0,0,,2005-03-21 08:00,2005-08-22 17:00,2007-01-09 08:01,2007-01-09 08:01,,2007-01-27 00:00,2007-01-27 00:00,,,2005-03-21 08:00,2005-07-01 17:00,,,,,PT_Normal,,,,,K8oWiq6OTBmwbRzfl0IHYQ,,,,N,0,0,,,2007-02-01 02:42,2007-02-04 01:05,hbe4678,hbe4678,,,0
1974,12458155,14517,6816079,13331,0,100,N,N,N,CP_Units,TT_Mile,DT_FixedDrtn,RV_OK,TK_Complete,EM000U000,Start U/G Model Reviews,,,,0,0,0,0,0,0,0,0,,2005-11-15 08:00,2005-11-15 08:00,2006-12-25 08:00,2006-12-25 08:00,,2007-01-27 00:00,2007-01-27 00:00,,,2005-11-15 08:00,2005-11-15 08:00,,,,,PT_Normal,,,,,oG+OIhpKTceFhGdBZLCaTQ,eeKdcrOmykOZlzTCusgroB,,,N,0,0,,,2007-02-01 02:42,2007-02-04 01:05,hbe4678,hbe4678,,,0
1975,12458156,14517,6816088,4050,1,0,N,N,N,CP_Units,TT_Task,DT_FixedDUR2,RV_OK,TK_NotStart,ZZ2110,MC230 - Transport/Customes 107/111,,744.016666666667,0.0166666666666667,152,0,0,0,240,0,0,0,2007-03-12 08:00,,,2007-06-13 08:01,2007-07-02 08:01,,2007-03-12 08:00,2007-03-30 17:00,2007-03-12 08:00,2007-03-30 17:00,2007-03-12 08:00,2007-04-10 17:00,,2007-06-13 08:01,2007-07-02 08:01,CS_MSOA,PT_Normal,,,,,eNjB+MalRa+JPu/b8g2XBg,7ars08hHQ26pNlt8wXeS9w,,,N,0,0,,,2007-02-01 02:42,2007-02-04 01:00,hbe4678,hbe4678,2007-03-12 08:00,2007-03-30 17:00,152
1976,12458157,14517,6816088,13330,1,100,N,N,N,CP_Units,TT_Task,DT_FixedDUR2,RV_OK,TK_Complete,PK000MD41H,Receive Quotes MD401,,,,0,,0,,120,,,0,,2005-03-28 08:00,2005-04-14 17:00,2007-05-26 08:01,2007-05-26 08:01,,2007-01-27 00:00,2007-01-27 00:00,,,2005-03-28 08:00,2005-04-15 17:00,,,,,PT_Normal,,,,,h9GQ+bD2QTCBGYBOSwf+mA,,,,N,,,,,2007-02-01 02:42,2007-02-04 01:05,hbe4678,hbe4678,,,0
1977,12458158,14517,6816088,13330,1,100,N,N,N,CP_Units,TT_Task,DT_FixedDUR2,RV_OK,TK_Complete,PK000MD41I,Eval Bids & Issue Recmd MD401,,,,0,0,0,0,40,0,0,0,,2005-05-24 00:00,2005-06-02 00:00,2007-05-26 08:01,2007-05-26 08:01,,2007-01-27 00:00,2007-01-27 00:00,,,2005-05-20 08:00,2005-05-26 17:00,,,,,PT_Normal,,,,,X9CH7IzkSYW7BDU4V1NK6A,,,,N,0,0,,,2007-02-01 02:42,2007-02-04 01:05,hbe4678,hbe4678,,,0
1978,12458159,14517,6816088,13330,1,100,N,N,N,CP_Units,TT_Task,DT_FixedDUR2,RV_OK,TK_Complete,PK000MD41J,Final Negotiate/Interim Award - MD401,,,,0,0,0,0,80,0,0,0,,2005-09-09 00:00,2005-09-23 00:00,2007-05-26 08:01,2007-05-26 08:01,,2007-01-27 00:00,2007-01-27 00:00,,,2005-08-29 08:00,2005-09-09 17:00,,,,,PT_Normal,,,,,bIC1xEOzSnK4/ug4fbxnjw,,,,N,0,0,,,2007-02-01 02:42,2007-02-04 01:05,hbe4678,hbe4678,,,0
1979,12458160,14517,6816088,13330,1,0,N,N,N,CP_Units,TT_Task,DT_FixedDUR2,RV_OK,TK_Active,PK000MD41S,MD401 - Marshaling 101-F,,1400,0,240,0,0,0,480,0,0,0,,2006-11-30 00:00,,2007-10-01 08:00,2007-11-09 17:00,2007-03-09 17:00,2007-01-29 08:00,2007-03-09 17:00,2007-01-29 08:00,2007-03-09 17:00,2006-11-15 08:00,2007-02-06 17:00,,2007-10-01 08:00,2007-11-09 17:00,,PT_Normal,,,,,uMwIPCDFTmeuURDCH/tKyA,,,,N,0,0,,,2007-02-01 02:42,2007-02-01 02:43,hbe4678,hbe4678,2007-01-29 08:00,2007-03-09 17:00,240
1980,12458161,14517,6816088,13330,1,100,N,N,N,CP_Units,TT_Task,DT_FixedDUR2,RV_OK,TK_Complete,PK000MD41M,Final Tab/Recmd  - MD401,,,,0,0,0,0,160,0,0,0,,2005-05-27 08:00,2005-08-23 00:00,2007-10-01 08:00,2007-10-01 08:00,,2007-01-27 00:00,2007-01-27 00:00,,,2005-05-27 08:00,2005-06-24 17:00,,,,,PT_Normal,,,,,v0+9fZ9XQ92z0tP5UkT3Aw,,,,N,0,0,,,2007-02-01 02:42,2007-02-04 01:05,hbe4678,hbe4678,,,0
1981,12458162,14517,6816088,4050,1,0,N,N,N,CP_Units,TT_Task,DT_FixedDUR2,RV_OK,TK_NotStart,PK000MD41O,MD401 - Transport/Customes 101-F,,1968.01666666667,0.0166666666666667,168,0,0,0,160,0,0,0,,,,2007-11-11 08:01,2007-12-02 08:01,,2007-03-10 08:00,2007-03-30 17:00,2007-03-10 08:00,2007-03-30 17:00,2007-03-10 08:00,2007-03-29 17:00,,2007-11-11 08:01,2007-12-02 08:01,,PT_Normal,,,,,hcUTSZFEQdGGJKYQx22wqQ,,,,N,0,0,,,2007-02-01 02:42,2007-02-04 01:00,hbe4678,hbe4678,2007-03-10 08:00,2007-03-30 17:00,168
1982,12458163,14517,6816088,13330,1,100,N,N,N,CP_Units,TT_Task,DT_FixedDUR2,RV_OK,TK_Complete,PK000MD41P,Issue Formal P.O. for  MD401,,,,0,0,0,0,80,0,0,0,,2005-09-12 08:00,2005-09-20 00:00,2007-10-01 08:00,2007-10-01 08:00,,2007-01-27 00:00,2007-01-27 00:00,,,2005-09-12 08:00,2005-09-23 17:00,,,,,PT_Normal,,,,,tArlvdwtSwuNn2J+c4ExVg,,,,N,0,0,,,2007-02-01 02:42,2007-02-04 01:05,hbe4678,hbe4678,,,0
1983,12458164,14517,6816088,13330,1,100,N,N,N,CP_Units,TT_Task,DT_FixedDUR2,RV_OK,TK_Complete,PK000MD42G,Issue MD402 RFQ,,,,0,,0,,40,,,0,,2005-03-21 08:00,2005-03-25 17:00,2007-01-09 08:01,2007-01-09 08:01,,2007-01-27 00:00,2007-01-27 00:00,,,2005-03-21 08:00,2005-03-25 17:00,,,,,PT_Normal,,,,,WoVjNdKFRw20tsm6nXPJrg,,,,N,,,,,2007-02-01 02:42,2007-02-04 01:05,hbe4678,hbe4678,,,0
1984,12458165,14517,6816088,13330,1,100,N,N,N,CP_Units,TT_Task,DT_FixedDUR2,RV_OK,TK_Complete,PK000MD42H,Receive Quotes MD402,,,,0,0,0,,120,,0,0,,2005-03-28 08:00,2005-04-21 00:00,2007-01-09 08:01,2007-01-09 08:01,,2007-01-27 00:00,2007-01-27 00:00,,,2005-03-28 08:00,2005-04-15 17:00,,,,,PT_Normal,,,,,hufb9ROVSziDg4DRegTecg,,,,N,0,0,,,2007-02-01 02:42,2007-02-04 01:05,hbe4678,hbe4678,,,0
1985,12458166,14517,6816088,13330,1,100,N,N,N,CP_Units,TT_Task,DT_FixedDUR2,RV_OK,TK_Complete,PK000MD42I,Eval Bids & Issue Recmd MD402,,,,0,0,0,0,40,0,0,0,,2005-05-20 00:00,2005-06-03 17:00,2007-01-09 08:01,2007-01-09 08:01,,2007-01-27 00:00,2007-01-27 00:00,,,2005-05-06 08:00,2005-05-12 17:00,,,,,PT_Normal,,,,,pjfcfwzXQwGE8oXER+WyIQ,,,,N,0,0,,,2007-02-01 02:42,2007-02-04 01:05,hbe4678,hbe4678,,,0
1986,12458167,14517,6816088,13330,1,100,N,N,N,CP_Units,TT_Task,DT_FixedDUR2,RV_OK,TK_Complete,PK000MD42J,Final Negotiate/Interim Award - MD402,,,,0,0,0,0,80,0,0,0,,2005-09-09 00:00,2005-09-16 00:00,2007-01-09 08:01,2007-01-09 08:01,,2007-01-27 00:00,2007-01-27 00:00,,,2005-08-29 08:00,2005-09-09 17:00,,,,,PT_Normal,,,,,h6Kd/9Y3SX2aJS+ji7IxQw,,,,N,0,0,,,2007-02-01 02:42,2007-02-04 01:05,hbe4678,hbe4678,,,0
1987,12458168,14517,6816088,13330,1,0,N,N,N,CP_Units,TT_Task,DT_FixedDUR2,RV_OK,TK_Active,PK000MD42K,"MD402 - Fabricate/PO Promise 102-F1, 102-F2",,1040,0,480,0,0,0,1400,0,0,0,,2005-09-16 00:00,,2007-07-30 08:00,2007-10-19 17:00,2007-04-20 17:00,2007-01-29 08:00,2007-04-20 17:00,2007-01-29 08:00,2007-04-20 17:00,2005-09-12 08:00,2006-05-16 17:00,,2007-07-30 08:00,2007-10-19 17:00,,PT_Normal,,,,,LL/vM6G5S164OkKKbyiSaQ,,,,N,0,0,,,2007-02-01 02:42,2007-02-01 02:43,hbe4678,hbe4678,2007-01-29 08:00,2007-04-20 17:00,480
1988,12458169,14517,6816088,13330,1,100,N,N,N,CP_Units,TT_Task,DT_FixedDUR2,RV_OK,TK_Complete,PK000MD42M,Requote/Bid Condition/Final Tab - MD402,,,,0,0,0,0,160,0,0,0,,2005-05-23 00:00,2005-05-31 00:00,2007-01-09 08:01,2007-01-09 08:01,,2007-01-27 00:00,2007-01-27 00:00,,,2005-05-31 08:00,2005-06-27 17:00,,,,,PT_Normal,,,,,ZbxmauG4QvCXa95OjfqFeA,,,,N,0,0,,,2007-02-01 02:42,2007-02-04 01:05,hbe4678,hbe4678,,,0
1989,12458170,14517,6816088,13330,1,100,N,N,N,CP_Units,TT_Task,DT_FixedDUR2,RV_OK,TK_Complete,PK000MD32I,Eval Bids & Issue Recmd MD302,,,,0,0,0,0,40,0,0,0,,2005-06-06 00:00,2005-06-10 00:00,2007-05-07 08:00,2007-05-07 08:00,,2007-01-27 00:00,2007-01-27 00:00,,,2005-06-20 08:00,2005-06-24 17:00,,,,,PT_Normal,,,,,Yp4oQaxZRPWttiVILiaErA,,,,N,0,0,,,2007-02-01 02:42,2007-02-04 01:05,hbe4678,hbe4678,,,0
1990,12458171,14517,6816088,13330,1,100,N,N,N,CP_Units,TT_Task,DT_FixedDUR2,RV_OK,TK_Complete,PK000MD32J,Final Negotiate/Interim Award - MD302,,,,0,0,0,0,80,0,0,0,,2005-09-09 00:00,2005-09-16 17:00,2007-05-07 08:00,2007-05-07 08:00,,2007-01-27 00:00,2007-01-27 00:00,,,2005-08-29 08:00,2005-09-09 17:00,,,,,PT_Normal,,,,,cylNqcYfQ2iBzjxhWqdLbA,,,,N,0,0,,,2007-02-01 02:42,2007-02-04 01:05,hbe4678,hbe4678,,,0
1991,12458172,14517,6816088,13330,1,100,N,N,N,CP_Units,TT_Task,DT_FixedDUR2,RV_OK,TK_Active,PK000MD32K,MD302 - Fabricate/PO Promise 104-D1/2,,680,0,80,0,0,0,2080,0,0,0,,2005-09-12 08:00,,2007-05-28 08:00,2007-06-08 17:00,2007-02-09 17:00,2007-01-29 08:00,2007-02-09 17:00,2007-01-29 08:00,2007-02-09 17:00,2005-09-12 08:00,2006-09-12 17:00,,2007-05-28 08:00,2007-06-08 17:00,,PT_Normal,,,,,AECidD9KQii7/NYOk0z+EQ,,,,N,0,0,,,2007-02-01 02:42,2007-02-01 02:43,hbe4678,hbe4678,2007-01-29 08:00,2007-02-09 17:00,80
1992,12458173,14517,6816088,13330,1,100,N,N,N,CP_Units,TT_Task,DT_FixedDUR2,RV_OK,TK_Complete,PK000MD32M,Requote/Bid Condition/Final Tab - MD302,,,,0,0,0,0,160,0,0,0,,2005-05-23 08:00,2005-06-10 00:00,2007-05-07 08:00,2007-05-07 08:00,,2007-01-27 00:00,2007-01-27 00:00,,,2005-05-23 08:00,2005-06-20 17:00,,,,,PT_Normal,,,,,qD/idwxiQwy/ABxHEPvBvw,,,,N,0,0,,,2007-02-01 02:42,2007-02-04 01:05,hbe4678,hbe4678,,,0
1993,12458174,14517,6816088,3079,1,0,N,N,N,CP_Units,TT_Task,DT_FixedDUR2,RV_OK,TK_NotStart,PK000MD32O,MD302 - Transport/Customes 104-D1/2,,960.016666666667,0.0166666666666667,168,0,0,0,240,0,0,0,,,,2007-07-08 08:01,2007-07-29 08:01,,2007-03-10 08:00,2007-03-30 17:00,2007-03-10 08:00,2007-03-30 17:00,2007-03-10 08:00,2007-04-08 17:00,,2007-07-08 08:01,2007-07-29 08:01,,PT_Normal,,,,,DxjXVT0mRjKQnjYJMbB34Q,,,,N,0,0,,,2007-02-01 02:42,2007-02-04 01:00,hbe4678,hbe4678,2007-03-10 08:00,2007-03-30 17:00,168
1994,12458175,14517,6816088,13330,1,100,N,N,N,CP_Units,TT_Task,DT_FixedDUR2,RV_OK,TK_Complete,PK000MD32P,Issue Formal P.O. for  MD302,,,,0,0,0,0,80,0,0,0,,2005-09-16 00:00,2005-10-07 17:00,2007-05-07 08:00,2007-05-07 08:00,,2007-01-27 00:00,2007-01-27 00:00,,,2005-09-12 08:00,2005-09-23 17:00,,,,,PT_Normal,,,,,xiwGm1k2RtyscJDeDKwoqg,,,,N,0,0,,,2007-02-01 02:42,2007-02-04 01:05,hbe4678,hbe4678,,,0
1995,12458176,14517,6816088,13330,1,100,N,N,N,CP_Units,TT_Task,DT_FixedDUR2,RV_OK,TK_Complete,PK000MD33G,Issue MD303 RFQ,,,,0,,0,,24,,,0,,2005-03-25 08:00,2005-03-25 17:00,2007-04-09 08:01,2007-04-09 08:01,,2007-01-27 00:00,2007-01-27 00:00,,,2005-03-25 08:00,2005-03-29 17:00,,,,,PT_Normal,,,,,yqTl1+21SpuoLhi8+k1iEA,,,,N,,,,,2007-02-01 02:42,2007-02-04 01:05,hbe4678,hbe4678,,,0
1996,12458177,14517,6816088,13330,1,100,N,N,N,CP_Units,TT_Task,DT_FixedDUR2,RV_OK,TK_Complete,PK000MD33H,Receive Quotes MD303,,,,0,0,0,,120,,0,0,,2005-03-28 08:00,2005-05-13 17:00,2007-04-09 08:01,2007-04-09 08:01,,2007-01-27 00:00,2007-01-27 00:00,,,2005-03-28 08:00,2005-04-15 17:00,,,,,PT_Normal,,,,,vUzPbwd/SGG1+WPEZSh45w,,,,N,0,0,,,2007-02-01 02:42,2007-02-04 01:05,hbe4678,hbe4678,,,0
1997,12458178,14517,6816088,13330,1,100,N,N,N,CP_Units,TT_Task,DT_FixedDUR2,RV_OK,TK_Complete,PK000MD33I,Eval Bids & Issue Recmd MD303,,,,0,0,0,0,40,0,0,0,,2005-06-03 08:00,2005-06-09 17:00,2007-04-09 08:01,2007-04-09 08:01,,2007-01-27 00:00,2007-01-27 00:00,,,2005-06-03 08:00,2005-06-09 17:00,,,,,PT_Normal,,,,,Zjk+9YYwSBG5yJXidYo7Dg,,,,N,0,0,,,2007-02-01 02:42,2007-02-04 01:05,hbe4678,hbe4678,,,0
1998,12458179,14517,6816088,13330,1,100,N,N,N,CP_Units,TT_Task,DT_FixedDUR2,RV_OK,TK_Complete,PK000MD33J,Final Negotiate/Interim Award - MD303,,,,0,0,0,0,40,0,0,0,,2005-08-29 08:00,2005-09-09 00:00,2007-04-09 08:01,2007-04-09 08:01,,2007-01-27 00:00,2007-01-27 00:00,,,2005-08-29 08:00,2005-09-02 17:00,,,,,PT_Normal,,,,,/ByUEyF0TeaORp3Wqunb8Q,,,,N,0,0,,,2007-02-01 02:42,2007-02-04 01:05,hbe4678,hbe4678,,,0
1999,12458180,14517,6816088,13330,1,100,N,N,N,CP_Units,TT_Task,DT_FixedDUR2,RV_OK,TK_Complete,PK000MD47K,MD406 - Fabricate/PO Promise ISBL DRUMS,,,,0,0,0,0,1440,0,0,0,,2005-10-31 08:00,2006-07-06 00:00,2007-12-09 08:01,2007-12-09 08:01,,2007-01-27 00:00,2007-01-27 00:00,,,2005-10-31 08:00,2006-07-11 17:00,,,,,PT_Normal,,,,,fawS4Za0T7SRg3vVRH1/cg,,,,N,0,0,,,2007-02-01 02:42,2007-02-04 01:05,hbe4678,hbe4678,,,0
2000,12458181,14517,6816088,13330,1,0,N,N,N,CP_Units,TT_Task,DT_FixedDUR2,RV_OK,TK_NotStart,PK000MD42O,"MD402 - Transport/Customes 102-F1, 102-F2",,1040,0,240,0,0,0,240,0,0,0,,,,2007-10-29 08:00,2007-12-07 17:00,,2007-04-30 08:00,2007-06-08 17:00,2007-04-30 08:00,2007-06-08 17:00,2007-04-30 08:00,2007-06-08 17:00,,2007-10-29 08:00,2007-12-07 17:00,,PT_Normal,,,,,TtsIUD18SbKA7b8pvLNZ+Q,,,,N,0,0,,,2007-02-01 02:42,2007-02-01 02:43,hbe4678,hbe4678,2007-04-30 08:00,2007-06-08 17:00,240
2001,12458182,14517,6816088,13330,1,100,N,N,N,CP_Units,TT_Task,DT_FixedDUR2,RV_OK,TK_Complete,PK000MD42P,Issue Formal P.O. for  MD402,,,,0,0,0,0,24,0,0,0,,2005-09-16 00:00,2005-10-03 00:00,2007-04-15 08:01,2007-04-15 08:01,,2007-01-27 00:00,2007-01-27 00:00,,,2005-09-12 08:00,2005-09-14 17:00,,,,,PT_Normal,,,,,wQSF/D+kQ+CzpEf/IMbekg,,,,N,0,0,,,2007-02-01 02:42,2007-02-04 01:05,hbe4678,hbe4678,,,0
2002,12458183,14517,6816088,13330,1,100,N,N,N,CP_Units,TT_Task,DT_FixedDUR2,RV_OK,TK_Complete,PK000MD43G,Issue MD403 RFQ,,,,0,,0,,24,,,0,,2005-03-23 08:00,2005-03-25 17:00,2007-04-24 08:01,2007-04-24 08:01,,2007-01-27 00:00,2007-01-27 00:00,,,2005-03-23 08:00,2005-03-25 17:00,,,,,PT_Normal,,,,,IySg7Q9/Q5Cm3fyX4Afbqw,,,,N,,,,,2007-02-01 02:42,2007-02-04 01:05,hbe4678,hbe4678,,,0
2003,12458184,14517,6816088,13330,1,100,N,N,N,CP_Units,TT_Task,DT_FixedDUR2,RV_OK,TK_Complete,PK000MD43H,Receive Quotes MD403,,,,0,0,0,,120,,0,0,,2005-03-28 08:00,2005-05-02 00:00,2007-04-24 08:01,2007-04-24 08:01,,2007-01-27 00:00,2007-01-27 00:00,,,2005-03-28 08:00,2005-04-15 17:00,,,,,PT_Normal,,,,,nQrYsDJNQmajqICLktlAbQ,,,,N,0,0,,,2007-02-01 02:42,2007-02-04 01:05,hbe4678,hbe4678,,,0
2004,12458185,14517,6816088,13330,1,100,N,N,N,CP_Units,TT_Task,DT_FixedDUR2,RV_OK,TK_Complete,PK000MD43I,Eval Bids & Issue Recmd MD403,,,,0,0,0,0,40,0,0,0,,2005-05-27 08:00,2005-06-03 17:00,2007-04-24 08:01,2007-04-24 08:01,,2007-01-27 00:00,2007-01-27 00:00,,,2005-05-27 08:00,2005-06-03 17:00,,,,,PT_Normal,,,,,wCQ6AeS8TGGgCU5oR5q0mA,,,,N,0,0,,,2007-02-01 02:42,2007-02-04 01:05,hbe4678,hbe4678,,,0
2005,12458186,14517,6816088,13330,1,100,N,N,N,CP_Units,TT_Task,DT_FixedDUR2,RV_OK,TK_Complete,PK000MD43J,Final Negotiate/Interim Award - MD403,,,,0,0,0,0,80,0,0,0,,2005-09-09 00:00,2005-09-23 00:00,2007-04-24 08:01,2007-04-24 08:01,,2007-01-27 00:00,2007-01-27 00:00,,,2005-08-29 08:00,2005-09-09 17:00,,,,,PT_Normal,,,,,cxy5xFHAQcWEFszsMuAyUg,,,,N,0,0,,,2007-02-01 02:42,2007-02-04 01:05,hbe4678,hbe4678,,,0
2006,12458187,14517,6816088,13330,1,0,N,N,N,CP_Units,TT_Task,DT_FixedDUR2,RV_OK,TK_Active,PK000MD43K,MD403 - Fabricate/PO Promise 106-F,,1080,0,416,0,0,0,2560,0,0,0,,2005-09-23 00:00,,2007-08-06 08:00,2007-10-16 17:00,2007-04-10 17:00,2007-01-29 08:00,2007-04-10 17:00,2007-01-29 08:00,2007-04-10 17:00,2005-09-12 08:00,2006-12-05 17:00,,2007-08-06 08:00,2007-10-16 17:00,,PT_Normal,,,,,Gmd1vmFITxaWq/rGbuIFYA,,,,N,0,0,,,2007-02-01 02:42,2007-02-01 02:43,hbe4678,hbe4678,2007-01-29 08:00,2007-04-10 17:00,416
2007,12458188,14517,6816088,13330,1,100,N,N,N,CP_Units,TT_Task,DT_FixedDUR2,RV_OK,TK_Complete,PK000MD43M,Requote/Bid Condition/Final Tab - MD403,,,,0,0,0,0,160,0,0,0,,2005-05-27 08:00,2005-06-03 17:00,2007-04-24 08:01,2007-04-24 08:01,,2007-01-27 00:00,2007-01-27 00:00,,,2005-05-27 08:00,2005-06-24 17:00,,,,,PT_Normal,,,,,/Fs+ebgeSZm5dY0aNv/GWg,,,,N,0,0,,,2007-02-01 02:42,2007-02-04 01:05,hbe4678,hbe4678,,,0
2008,12458189,14517,6816088,13330,1,0,N,N,N,CP_Units,TT_Task,DT_FixedDUR2,RV_OK,TK_NotStart,PK000MD43O,MD403 - Transport/Customs 106-F,,1080,0,160,0,0,0,160,0,0,0,,,,2007-12-03 08:00,2007-12-28 17:00,,2007-05-28 08:00,2007-06-22 17:00,2007-05-28 08:00,2007-06-22 17:00,2007-05-28 08:00,2007-06-22 17:00,,2007-12-03 08:00,2007-12-28 17:00,,PT_Normal,,,,,emZYg05gTdmYZY9ca44nGQ,,,,N,0,0,,,2007-02-01 02:42,2007-02-01 02:43,hbe4678,hbe4678,2007-05-28 08:00,2007-06-22 17:00,160
2009,12458190,14517,6816088,13330,1,100,N,N,N,CP_Units,TT_Task,DT_FixedDUR2,RV_OK,TK_Complete,PK000MD43P,Issue Formal P.O. for  MD403,,,,0,0,0,0,24,0,0,0,,2005-09-23 00:00,2005-10-07 17:00,2007-10-16 17:00,2007-10-16 17:00,,2007-01-27 00:00,2007-01-27 00:00,,,2005-09-12 08:00,2005-09-14 17:00,,,,,PT_Normal,,,,,15dBAbXuRCiHNuSpJyo4rg,,,,N,0,0,,,2007-02-01 02:42,2007-02-04 01:05,hbe4678,hbe4678,,,0
2010,12458191,14517,6816088,13330,1,100,N,N,N,CP_Units,TT_Task,DT_FixedDUR2,RV_OK,TK_Complete,PK000MD44G,Issue MD404 RFQ,,,,0,,0,,24,,,0,,2005-03-31 08:00,2005-03-31 17:00,2007-01-09 08:01,2007-01-09 08:01,,2007-01-27 00:00,2007-01-27 00:00,,,2005-03-31 08:00,2005-04-04 17:00,,,,,PT_Normal,,,,,Ll9+0s7HR4+cpWumR8QsEQ,,,,N,,,,,2007-02-01 02:42,2007-02-04 01:05,hbe4678,hbe4678,,,0
2011,12458192,14517,6816088,13330,1,100,N,N,N,CP_Units,TT_Task,DT_FixedDUR2,RV_OK,TK_Complete,PK000MD44H,Receive Quotes MD404,,,,0,0,0,,120,,0,0,,2005-04-01 08:00,2005-04-21 00:00,2007-01-09 08:01,2007-01-09 08:01,,2007-01-27 00:00,2007-01-27 00:00,,,2005-04-01 08:00,2005-04-21 17:00,,,,,PT_Normal,,,,,QY3Tu05AQ/2YASFcNQTQ8A,,,,N,0,0,,,2007-02-01 02:42,2007-02-04 01:05,hbe4678,hbe4678,,,0
2012,12458193,14517,6816088,13330,1,100,N,N,N,CP_Units,TT_Task,DT_FixedDUR2,RV_OK,TK_Complete,PK000MD44I,Eval Bids & Issue Recmd MD404,,,,0,0,0,0,40,0,0,0,,2005-05-20 00:00,2005-06-03 17:00,2007-01-09 08:01,2007-01-09 08:01,,2007-01-27 00:00,2007-01-27 00:00,,,2005-05-06 08:00,2005-05-12 17:00,,,,,PT_Normal,,,,,Cz53wMqPTg6A9Z9u8SFkPg,,,,N,0,0,,,2007-02-01 02:42,2007-02-04 01:05,hbe4678,hbe4678,,,0
2013,12458194,14517,6816088,13330,1,100,N,N,N,CP_Units,TT_Task,DT_FixedDUR2,RV_OK,TK_Complete,PK000MD44J,Final Negotiate/Interim Award - MD404,,,,0,0,0,0,80,0,0,0,,2005-09-09 00:00,2005-09-16 00:00,2007-01-09 08:01,2007-01-09 08:01,,2007-01-27 00:00,2007-01-27 00:00,,,2005-08-29 08:00,2005-09-09 17:00,,,,,PT_Normal,,,,,/UWAcy68SmCKzzr36H2UFw,,,,N,0,0,,,2007-02-01 02:42,2007-02-04 01:05,hbe4678,hbe4678,,,0
2014,12458195,14517,6816088,13330,1,100,N,N,N,CP_Units,TT_Task,DT_FixedDUR2,RV_OK,TK_Complete,PK000MD44K,MD404 - Fabricate/PO Promise 109-F,,,,0,0,0,0,1120,0,0,0,,2005-09-16 00:00,2006-06-30 00:00,2007-07-02 08:01,2007-07-02 08:01,,2007-01-27 00:00,2007-01-27 00:00,,,2005-10-17 08:00,2006-05-02 17:00,,,,,PT_Normal,,,,,1cGW5hf1RgyTun2/en242w,,,,N,0,0,,,2007-02-01 02:42,2007-02-04 01:05,hbe4678,hbe4678,,,0
2015,12458196,14517,6816088,13330,1,100,N,N,N,CP_Units,TT_Task,DT_FixedDUR2,RV_OK,TK_Complete,PK000MD44O,MD404 - Transport/Customes 109-F,,,,0,0,0,0,240,0,0,0,,2006-08-16 00:00,2006-09-14 00:00,2007-07-02 08:01,2007-07-02 08:01,,2007-01-27 00:00,2007-01-27 00:00,,,2006-09-11 08:00,2006-10-20 17:00,,,,,PT_Normal,,,,,39gKuUgtTa691yDFrdsdbg,,,,N,0,0,,,2007-02-01 02:42,2007-02-04 01:05,hbe4678,hbe4678,,,0
2016,12458197,14517,6816088,13330,1,100,N,N,N,CP_Units,TT_Task,DT_FixedDUR2,RV_OK,TK_Complete,PK000MD44P,Issue Formal P.O. for  MD404,,,,0,0,0,0,24,0,0,0,,2005-09-16 00:00,2005-10-03 00:00,2007-04-24 08:01,2007-04-24 08:01,,2007-01-27 00:00,2007-01-27 00:00,,,2005-09-12 08:00,2005-09-14 17:00,,,,,PT_Normal,,,,,qoe2jqmeS6ql3w/JEuP1PA,,,,N,0,0,,,2007-02-01 02:42,2007-02-04 01:05,hbe4678,hbe4678,,,0
2017,12458198,14517,6816088,13330,1,100,N,N,N,CP_Units,TT_Task,DT_FixedDUR2,RV_OK,TK_Complete,PK000MD45G,Issue MD405 RFQ,,,,0,,0,,24,,,0,,2005-03-31 08:00,2005-03-31 17:00,2007-04-15 08:01,2007-04-15 08:01,,2007-01-27 00:00,2007-01-27 00:00,,,2005-03-31 08:00,2005-04-04 17:00,,,,,PT_Normal,,,,,grK2eC+QRxK1DUQLEt/DEw,,,,N,,,,,2007-02-01 02:42,2007-02-04 01:05,hbe4678,hbe4678,,,0
2018,12458199,14517,6816088,13330,1,100,N,N,N,CP_Units,TT_Task,DT_FixedDUR2,RV_OK,TK_Complete,PK000MD46G,Issue MD411 RFQ,,,,0,,0,,24,,,0,,2005-03-31 08:00,2005-03-31 17:00,2007-02-07 08:01,2007-02-07 08:01,,2007-01-27 00:00,2007-01-27 00:00,,,2005-03-31 08:00,2005-04-04 17:00,,,,,PT_Normal,,,,,i10M9bkURaaCyF7AN9yuIg,,,,N,,,,,2007-02-01 02:42,2007-02-04 01:05,hbe4678,hbe4678,,,0
2019,12458200,14517,6816088,13330,1,100,N,N,N,CP_Units,TT_Task,DT_FixedDUR2,RV_OK,TK_Complete,PK000MD34M,Requote/Bid Condition/Final Tab - MD304,,,,0,0,0,0,160,0,0,0,,2005-05-23 00:00,2005-06-03 17:00,2007-04-15 08:01,2007-04-15 08:01,,2007-01-27 00:00,2007-01-27 00:00,,,2005-05-20 08:00,2005-06-17 17:00,,,,,PT_Normal,,,,,+5lt8sF5QtCFYEyEosno3w,,,,N,0,0,,,2007-02-01 02:42,2007-02-04 01:05,hbe4678,hbe4678,,,0
2020,12458201,14517,6816088,4050,1,0,N,N,N,CP_Units,TT_Task,DT_FixedDUR2,RV_OK,TK_NotStart,PK000MD34O,"MD304 - Transport/Customes 106-D, 109-DA/B",,2240.01666666667,0.0166666666666667,168,0,0,0,240,0,0,0,,,,2007-12-15 08:01,2008-01-05 08:01,,2007-03-10 08:00,2007-03-30 17:00,2007-03-10 08:00,2007-03-30 17:00,2007-03-10 08:00,2007-04-08 17:00,,2007-12-15 08:01,2008-01-05 08:01,,PT_Normal,,,,,H0DSoRgtSVyBwjQbDFynFA,,,,N,0,0,,,2007-02-01 02:42,2007-02-04 01:00,hbe4678,hbe4678,2007-03-10 08:00,2007-03-30 17:00,168
2021,12458202,14517,6816088,13330,1,100,N,N,N,CP_Units,TT_Task,DT_FixedDUR2,RV_OK,TK_Complete,PK000MD34P,Issue Formal P.O. for  MD304,,,,0,0,0,0,24,0,0,0,,2005-09-16 00:00,2005-10-19 00:00,2007-05-07 08:00,2007-05-07 08:00,,2007-01-27 00:00,2007-01-27 00:00,,,2005-09-12 08:00,2005-09-14 17:00,,,,,PT_Normal,,,,,AWtm9tQETA+X/zbqvbs6EA,,,,N,0,0,,,2007-02-01 02:42,2007-02-04 01:05,hbe4678,hbe4678,,,0
2022,12458203,14517,6816088,13330,1,100,N,N,N,CP_Units,TT_Task,DT_FixedDUR2,RV_OK,TK_Complete,PK000MD41G,Issue MD401 RFQ,,,,0,,0,,24,,,0,,2005-03-23 08:00,2005-03-25 17:00,2007-05-26 08:01,2007-05-26 08:01,,2007-01-27 00:00,2007-01-27 00:00,,,2005-03-23 08:00,2005-03-25 17:00,,,,,PT_Normal,,,,,pIQO/c1QQx+GY06oLojBlQ,,,,N,,,,,2007-02-01 02:42,2007-02-04 01:05,hbe4678,hbe4678,,,0
2023,12458204,14517,6816088,13330,1,100,N,N,N,CP_Units,TT_Task,DT_FixedDUR2,RV_OK,TK_Complete,PK000MD47P,Issue Formal P.O. for  MD406,,,,0,0,0,0,80,0,0,0,,2005-10-25 00:00,2005-11-03 00:00,2007-12-09 08:01,2007-12-09 08:01,,2007-01-27 00:00,2007-01-27 00:00,,,2005-10-17 08:00,2005-10-28 17:00,,,,,PT_Normal,,,,,odVNxGUeSZKbJ+gE6gLnpw,,,,N,0,0,,,2007-02-01 02:42,2007-02-04 01:05,hbe4678,hbe4678,,,0
2024,12458205,14517,6816088,13330,1,100,N,N,N,CP_Units,TT_Task,DT_FixedDUR2,RV_OK,TK_Complete,PK000MD51G,Issue MD501 RFQ,,,,0,,0,,40,,,0,,2005-03-21 08:00,2005-03-25 17:00,2007-04-28 08:01,2007-04-28 08:01,,2007-01-27 00:00,2007-01-27 00:00,,,2005-03-21 08:00,2005-03-25 17:00,,,,,PT_Normal,,,,,tvobt88qT3aFkmJLiazAtw,,,,N,,,,,2007-02-01 02:42,2007-02-04 01:05,hbe4678,hbe4678,,,0
2025,12458206,14517,6816088,13330,1,100,N,N,N,CP_Units,TT_Task,DT_FixedDUR2,RV_OK,TK_Complete,PK000MD51H,Receive Quotes MD501,,,,0,0,0,,120,,0,0,,2005-03-28 08:00,2005-04-21 00:00,2007-04-28 08:01,2007-04-28 08:01,,2007-01-27 00:00,2007-01-27 00:00,,,2005-03-28 08:00,2005-04-15 17:00,,,,,PT_Normal,,,,,IUpQrn8YQTW37Fi2kLO4iQ,,,,N,0,0,,,2007-02-01 02:42,2007-02-04 01:05,hbe4678,hbe4678,,,0
2026,12458207,14517,6816088,13330,1,100,N,N,N,CP_Units,TT_Task,DT_FixedDUR2,RV_OK,TK_Complete,PK000MD51I,Eval Bids & Issue Recmd MD501,,,,0,0,0,0,40,0,0,0,,2005-05-06 08:00,2005-06-24 00:00,2007-04-28 08:01,2007-04-28 08:01,,2007-01-27 00:00,2007-01-27 00:00,,,2005-05-06 08:00,2005-05-12 17:00,,,,,PT_Normal,,,,,qDrUIK3iQ8KJ5pu0HYfTDQ,,,,N,0,0,,,2007-02-01 02:42,2007-02-04 01:05,hbe4678,hbe4678,,,0
2027,12458208,14517,6816088,13330,1,100,N,N,N,CP_Units,TT_Task,DT_FixedDUR2,RV_OK,TK_Complete,PK000MD51J,Final Negotiate/Interim Award - MD501,,,,0,0,0,0,80,0,0,0,,2005-09-09 00:00,2005-09-26 17:00,2007-04-28 08:01,2007-04-28 08:01,,2007-01-27 00:00,2007-01-27 00:00,,,2005-08-29 08:00,2005-09-09 17:00,,,,,PT_Normal,,,,,iQo03QjaRWGPJAXwFojFTg,,,,N,0,0,,,2007-02-01 02:42,2007-02-04 01:05,hbe4678,hbe4678,,,0
2028,12458209,14517,6816088,13330,1,100,N,N,N,CP_Units,TT_Task,DT_FixedDUR2,RV_OK,TK_Complete,PK000MD51K,MD501 - Fabricate/PO Promise 107-D,,,,0,0,0,0,1280,0,0,0,,2005-09-27 00:00,2006-08-08 00:00,2007-12-03 08:01,2007-12-03 08:01,,2007-01-27 00:00,2007-01-27 00:00,,,2005-10-17 08:00,2006-05-30 17:00,,,,,PT_Normal,,,,,50MExrhNSAm4ZNLzRWCSDA,,,,N,0,0,,,2007-02-01 02:42,2007-02-04 01:05,hbe4678,hbe4678,,,0
2029,12458210,14517,6816088,13330,1,100,N,N,N,CP_Units,TT_Task,DT_FixedDUR2,RV_OK,TK_Complete,PK000MD51M,Requote/Bid Condition/Final Tab - MD501,,,,0,0,0,0,160,0,0,0,,2005-05-10 00:00,2005-06-03 00:00,2007-04-28 08:01,2007-04-28 08:01,,2007-01-27 00:00,2007-01-27 00:00,,,2005-05-06 08:00,2005-06-03 17:00,,,,,PT_Normal,,,,,hAFBSCMOQ0mlKQ1knXBRkw,,,,N,0,0,,,2007-02-01 02:42,2007-02-04 01:05,hbe4678,hbe4678,,,0
2030,12458211,14517,6816088,13330,1,100,N,N,N,CP_Units,TT_Task,DT_FixedDUR2,RV_OK,TK_Complete,PK000MD51O,MD501 - Transport/Customes 107-D,,,,0,0,0,0,240,0,0,0,,2006-11-13 08:00,2006-12-09 00:00,2007-12-03 08:01,2007-12-03 08:01,,2007-01-27 00:00,2007-01-27 00:00,,,2006-11-13 08:00,2006-12-22 17:00,,,,,PT_Normal,,,,,vc0UyVm6RCmBW8dJtIZutQ,,,,N,0,0,,,2007-02-01 02:42,2007-02-04 01:05,hbe4678,hbe4678,,,0
2031,12458212,14517,6816088,13330,1,100,N,N,N,CP_Units,TT_Task,DT_FixedDUR2,RV_OK,TK_Complete,PK000MD51P,Issue Formal P.O. for  MD501,,,,0,0,0,0,80,0,0,0,,2005-09-26 00:00,2005-10-07 00:00,2007-12-03 08:01,2007-12-03 08:01,,2007-01-27 00:00,2007-01-27 00:00,,,2005-09-27 08:00,2005-10-10 17:00,,,,,PT_Normal,,,,,anZEFTCAQoKp1XP0rqzBbw,,,,N,0,0,,,2007-02-01 02:42,2007-02-04 01:05,hbe4678,hbe4678,,,0
2032,12458213,14517,6816088,13330,1,100,N,N,N,CP_Units,TT_Task,DT_FixedDUR2,RV_OK,TK_Complete,PK000MD45I,Eval Bids & Issue Recmd MD405,,,,0,0,0,0,40,0,0,0,,2005-05-20 00:00,2005-06-01 00:00,2007-04-15 08:01,2007-04-15 08:01,,2007-01-27 00:00,2007-01-27 00:00,,,2005-05-06 08:00,2005-05-12 17:00,,,,,PT_Normal,,,,,41munbxuTniXJxrxuKOjSQ,,,,N,0,0,,,2007-02-01 02:42,2007-02-04 01:05,hbe4678,hbe4678,,,0
2033,12458214,14517,6816088,13330,1,100,N,N,N,CP_Units,TT_Task,DT_FixedDUR2,RV_OK,TK_Complete,PK000MD45J,Final Negotiate/Interim Award - MD405,,,,0,0,0,0,80,0,0,0,,2005-09-09 00:00,2005-09-16 00:00,2007-04-15 08:01,2007-04-15 08:01,,2007-01-27 00:00,2007-01-27 00:00,,,2005-08-29 08:00,2005-09-09 17:00,,,,,PT_Normal,,,,,gsHhQzNNRsCUoWJrwzYmFw,,,,N,0,0,,,2007-02-01 02:42,2007-02-04 01:05,hbe4678,hbe4678,,,0
2034,12458215,14517,6816088,13330,1,100,N,N,N,CP_Units,TT_Task,DT_FixedDUR2,RV_OK,TK_Complete,PK000MD45K,MD405 - Fabricate/PO Promise ISBL DRUMS - 156-F & 157-F,,,,0,0,0,0,1000,0,0,0,,2005-09-16 00:00,2006-07-06 00:00,2007-08-23 08:01,2007-08-23 08:01,,2007-01-27 00:00,2007-01-27 00:00,,,2005-09-12 08:00,2006-03-07 17:00,,,,,PT_Normal,,,,,BJesP7jcQkmZQM3O3lMNRQ,,,,N,0,0,,,2007-02-01 02:42,2007-02-04 01:05,hbe4678,hbe4678,,,0
2035,12458216,14517,6816088,13330,1,100,N,N,N,CP_Units,TT_Task,DT_FixedDUR2,RV_OK,TK_Complete,PK000MD45O,MD405 - Transport/Customes ISBL DRUMS - 156-F & 157-F,,,,0,0,0,0,240,0,0,0,,2006-08-16 00:00,2006-09-14 00:00,2007-08-23 08:01,2007-08-23 08:01,,2007-01-27 00:00,2007-01-27 00:00,,,2006-09-01 08:00,2006-10-12 17:00,,,,,PT_Normal,,,,,oBn7m10HRK+zwZLDhS7rng,,,,N,0,0,,,2007-02-01 02:42,2007-02-04 01:05,hbe4678,hbe4678,,,0
2036,12458217,14517,6816088,13330,1,100,N,N,N,CP_Units,TT_Task,DT_FixedDUR2,RV_OK,TK_Complete,PK000MD45P,Issue Formal P.O. for  MD405,,,,0,0,0,0,24,0,0,0,,2005-09-16 00:00,2005-10-03 00:00,2007-08-23 08:01,2007-08-23 08:01,,2007-01-27 00:00,2007-01-27 00:00,,,2005-09-12 08:00,2005-09-14 17:00,,,,,PT_Normal,,,,,cUpxBcE4TAqdRw4dSG623Q,,,,N,0,0,,,2007-02-01 02:42,2007-02-04 01:05,hbe4678,hbe4678,,,0
2037,12458218,14517,6816088,13330,1,100,N,N,N,CP_Units,TT_Task,DT_FixedDUR2,RV_OK,TK_Complete,PK000MD46H,Receive Quotes MD411,,,,0,0,0,,120,,0,0,,2005-04-01 08:00,2005-04-21 00:00,2007-02-07 08:01,2007-02-07 08:01,,2007-01-27 00:00,2007-01-27 00:00,,,2005-04-01 08:00,2005-04-21 17:00,,,,,PT_Normal,,,,,5GAPPwITT5+c+36kwvlPxw,,,,N,0,0,,,2007-02-01 02:42,2007-02-04 01:05,hbe4678,hbe4678,,,0
2038,12458219,14517,6816088,13330,1,100,N,N,N,CP_Units,TT_Task,DT_FixedDUR2,RV_OK,TK_Complete,PK000MD46I,Eval Bids & Issue Recmd MD411,,,,0,0,0,0,40,0,0,0,,2005-05-23 00:00,2005-06-03 17:00,2007-02-07 08:01,2007-02-07 08:01,,2007-01-27 00:00,2007-01-27 00:00,,,2005-05-20 08:00,2005-05-26 17:00,,,,,PT_Normal,,,,,7P/Hiuz8R+yRYTqL3gVNvQ,,,,N,0,0,,,2007-02-01 02:42,2007-02-04 01:05,hbe4678,hbe4678,,,0
2039,12458220,14517,6816088,13330,1,100,N,N,N,CP_Units,TT_Task,DT_FixedDUR2,RV_OK,TK_Complete,PK000MD46J,Final Negotiate/Interim Award - MD411,,,,0,0,0,0,80,0,0,0,,2005-09-09 00:00,2005-09-16 00:00,2007-02-07 08:01,2007-02-07 08:01,,2007-01-27 00:00,2007-01-27 00:00,,,2005-08-29 08:00,2005-09-09 17:00,,,,,PT_Normal,,,,,ACly+S+ITTyA0jjwj9rCbw,,,,N,0,0,,,2007-02-01 02:42,2007-02-04 01:05,hbe4678,hbe4678,,,0
2040,12458221,14517,6816088,13330,1,100,N,N,N,CP_Units,TT_Task,DT_FixedDUR2,RV_OK,TK_Complete,PK000MD46K,MD411 - Fabricate/PO Promise OSBL DRUMS - 2203-F & 2204-F,,,,0,0,0,0,1000,0,0,0,,2005-09-16 00:00,2006-06-20 00:00,2007-10-30 08:00,2007-10-30 08:00,,2007-01-27 00:00,2007-01-27 00:00,,,2005-09-12 08:00,2006-03-07 17:00,,,,,PT_Normal,,,,,oxeYY4YZRhy4H9m+zJoU9Q,,,,N,0,0,,,2007-02-01 02:42,2007-02-04 01:05,hbe4678,hbe4678,,,0
2041,12458222,14517,6816088,13330,1,100,N,N,N,CP_Units,TT_Task,DT_FixedDUR2,RV_OK,TK_Complete,PK000MD46O,MD411 - Transport/Customes OSBL DRUMS - 2203-F & 2204-F,,,,0,0,0,0,240,0,0,0,,2006-08-16 00:00,2006-09-14 00:00,2007-10-30 08:00,2007-10-30 08:00,,2007-01-27 00:00,2007-01-27 00:00,,,2006-08-21 08:00,2006-09-29 17:00,,,,,PT_Normal,,,,,ivRJjdBHSJCkjqdpOcdq9w,,,,N,0,0,,,2007-02-01 02:42,2007-02-04 01:05,hbe4678,hbe4678,,,0
2042,12458223,14517,6816088,13330,1,100,N,N,N,CP_Units,TT_Task,DT_FixedDUR2,RV_OK,TK_Complete,PK000MD46P,Issue Formal P.O. for  MD411,,,,0,0,0,0,24,0,0,0,,2005-09-16 00:00,2005-10-03 00:00,2007-05-07 08:00,2007-05-07 08:00,,2007-01-27 00:00,2007-01-27 00:00,,,2005-09-12 08:00,2005-09-14 17:00,,,,,PT_Normal,,,,,igNjsHnaRqK2LIRr0SZIBQ,,,,N,0,0,,,2007-02-01 02:42,2007-02-04 01:05,hbe4678,hbe4678,,,0
2043,12458224,14517,6816088,13330,1,100,N,N,N,CP_Units,TT_Task,DT_FixedDUR2,RV_OK,TK_Complete,PK000MD47G,Issue MD406 RFQ,,,,0,0,0,0,24,0,0,0,,2005-06-13 00:00,2005-06-13 00:00,2007-01-09 08:01,2007-01-09 08:01,,2007-01-27 00:00,2007-01-27 00:00,,,2005-06-03 08:00,2005-06-07 17:00,,,,,PT_Normal,,,,,R9JCFJvjT/GuIXAbOuMT/g,,,,N,0,0,,,2007-02-01 02:42,2007-02-04 01:05,hbe4678,hbe4678,,,0
2044,12458225,14517,6816088,13330,1,100,N,N,N,CP_Units,TT_Task,DT_FixedDUR2,RV_OK,TK_Complete,PK000MD47H,Receive Quotes MD406,,,,0,0,0,0,120,0,0,0,,2005-06-14 00:00,2005-07-07 00:00,2007-01-09 08:01,2007-01-09 08:01,,2007-01-27 00:00,2007-01-27 00:00,,,2005-06-08 08:00,2005-06-28 17:00,,,,,PT_Normal,,,,,Pfb9USGHSH6oTyKRdHMhhQ,,,,N,0,0,,,2007-02-01 02:42,2007-02-04 01:05,hbe4678,hbe4678,,,0
2045,12458226,14517,6816088,13330,1,100,N,N,N,CP_Units,TT_Task,DT_FixedDUR2,RV_OK,TK_Complete,PK000MD47J,Final Negotiate/Interim Award - MD406,,,,0,0,0,0,80,0,0,0,,2005-10-21 00:00,2005-10-25 17:00,2007-01-09 08:01,2007-01-09 08:01,,2007-01-27 00:00,2007-01-27 00:00,,,2005-10-24 08:00,2005-11-04 17:00,,,,,PT_Normal,,,,,eoGlUvGBSGiuHd/+Eao7hA,,,,N,0,0,,,2007-02-01 02:42,2007-02-04 01:05,hbe4678,hbe4678,,,0
2046,12458227,14517,6816088,13330,1,0,N,N,N,CP_Units,TT_Task,DT_FixedDUR2,RV_OK,TK_Active,PK000MD33K,MD303 - Fabricate/PO Promise 105-D,,400.016666666667,0,472,0,0,0,3280,0,0,0,,2005-09-09 00:00,,2007-04-09 08:01,2007-06-29 08:01,2007-04-19 17:00,2007-01-29 08:00,2007-04-19 17:00,2007-01-29 08:00,2007-04-19 17:00,2005-09-05 08:00,2007-04-03 17:00,,2007-04-09 08:01,2007-06-29 08:01,,PT_Normal,,,,,bem84ogzRP+aqzjHdPp2cQ,,,,N,0,0,,,2007-02-01 02:42,2007-02-04 01:00,hbe4678,hbe4678,2007-01-29 08:00,2007-04-19 17:00,472
2047,12458228,14517,6816088,13330,1,100,N,N,N,CP_Units,TT_Task,DT_FixedDUR2,RV_OK,TK_Complete,PK000MD33M,Final Tab/Recmd - MD303,,,,0,0,0,0,40,0,0,0,,2005-06-13 08:00,2005-08-23 00:00,2007-04-09 08:01,2007-04-09 08:01,,2007-01-27 00:00,2007-01-27 00:00,,,2005-06-13 08:00,2005-06-17 17:00,,,,,PT_Normal,,,,,htJfhJ0DTD+JxKPdF5w6uA,,,,N,0,0,,,2007-02-01 02:42,2007-02-04 01:05,hbe4678,hbe4678,,,0
2048,12458229,14517,6816088,13330,1,0,N,N,N,CP_Units,TT_Task,DT_FixedDUR2,RV_OK,TK_NotStart,PK000MD33O,MD303 - Transport/Customes 105-D,,400.016666666667,0,160,0,0,0,160,0,0,0,,,,2007-07-23 08:01,2007-08-20 08:01,,2007-05-14 08:00,2007-06-08 17:00,2007-05-14 08:00,2007-06-08 17:00,2007-05-14 08:00,2007-06-08 17:00,,2007-07-23 08:01,2007-08-20 08:01,,PT_Normal,,,,,nNDCu1trROyTSG6LEs1Wsg,,,,N,0,0,,,2007-02-01 02:42,2007-02-04 01:00,hbe4678,hbe4678,2007-05-14 08:00,2007-06-08 17:00,160
2049,12458230,14517,6816088,13330,1,100,N,N,N,CP_Units,TT_Task,DT_FixedDUR2,RV_OK,TK_Complete,PK000MD33P,Issue Formal P.O. for  MD303,,,,0,0,0,0,80,0,0,0,,2005-09-09 00:00,2005-09-19 00:00,2007-06-29 08:01,2007-06-29 08:01,,2007-01-27 00:00,2007-01-27 00:00,,,2005-09-05 08:00,2005-09-16 17:00,,,,,PT_Normal,,,,,0/pMDj6HRrCpIIjYxkFoXA,,,,N,0,0,,,2007-02-01 02:42,2007-02-04 01:05,hbe4678,hbe4678,,,0
2050,12458231,14517,6816088,13330,1,100,N,N,N,CP_Units,TT_Task,DT_FixedDUR2,RV_OK,TK_Complete,PK000MD34G,Issue MD304 RFQ,,,,0,,0,,40,,,0,,2005-03-21 08:00,2005-03-25 17:00,2007-04-15 08:01,2007-04-15 08:01,,2007-01-27 00:00,2007-01-27 00:00,,,2005-03-21 08:00,2005-03-25 17:00,,,,,PT_Normal,,,,,W/yEXkJQTOifsVtB4HaP/w,,,,N,,,,,2007-02-01 02:42,2007-02-04 01:05,hbe4678,hbe4678,,,0
2051,12458232,14517,6816088,13330,1,100,N,N,N,CP_Units,TT_Task,DT_FixedDUR2,RV_OK,TK_Complete,PK000MD34I,Eval Bids & Issue Recmd MD304,,,,0,0,0,0,40,0,0,0,,2005-05-24 08:00,2005-06-10 17:00,2007-04-15 08:01,2007-04-15 08:01,,2007-01-27 00:00,2007-01-27 00:00,,,2005-05-24 08:00,2005-05-31 17:00,,,,,PT_Normal,,,,,R8eAWzeRSEGVwfhGnrcyLg,,,,N,0,0,,,2007-02-01 02:42,2007-02-04 01:05,hbe4678,hbe4678,,,0
2052,12458233,14517,6816088,13330,1,100,N,N,N,CP_Units,TT_Task,DT_FixedDUR2,RV_OK,TK_Complete,PK000MD34J,Final Negotiate/Interim Award - MD304,,,,0,0,0,0,80,0,0,0,,2005-09-09 00:00,2005-09-16 00:00,2007-04-15 08:01,2007-04-15 08:01,,2007-01-27 00:00,2007-01-27 00:00,,,2005-08-29 08:00,2005-09-09 17:00,,,,,PT_Normal,,,,,Ns0SAtwhQbO/60JZj9TzSw,,,,N,0,0,,,2007-02-01 02:42,2007-02-04 01:05,hbe4678,hbe4678,,,0
2053,12458234,14517,6816088,13330,1,100,N,N,N,CP_Units,TT_Task,DT_FixedDUR2,RV_OK,TK_Complete,PK000MJ21P,Issue Formal P.O. for  MJ202,,,,0,0,0,0,80,0,0,0,,2005-09-09 00:00,2005-10-20 00:00,2007-07-23 08:01,2007-07-23 08:01,,2007-01-27 00:00,2007-01-27 00:00,,,2005-10-17 08:00,2005-10-28 17:00,,,,,PT_Normal,,,,,LXv2QdPjTleFp4B6L+pbkA,,,,N,0,0,,,2007-02-01 02:42,2007-02-04 01:05,hbe4678,hbe4678,,,0
2054,12458235,14517,6816088,13330,1,100,N,N,N,CP_Units,TT_Task,DT_FixedDUR2,RV_OK,TK_Complete,PK000MJ22G,Issue MJ201 RFQ,,,,0,,0,,24,,,0,,2005-03-21 08:00,2005-03-21 17:00,2006-12-25 08:00,2006-12-25 08:00,,2007-01-27 00:00,2007-01-27 00:00,,,2005-03-21 08:00,2005-03-23 17:00,,,,,PT_Normal,,,,,dQMoGlsGQn+mBPty/y2JhA,,,,N,,,,,2007-02-01 02:42,2007-02-04 01:05,hbe4678,hbe4678,,,0
2055,12458236,14517,6816088,13330,1,100,N,N,N,CP_Units,TT_Task,DT_FixedDUR2,RV_OK,TK_Complete,PK000MJ22H,Receive Quotes MJ201,,,,0,,0,,120,,,0,,2005-03-22 08:00,2005-04-14 17:00,2006-12-25 08:00,2006-12-25 08:00,,2007-01-27 00:00,2007-01-27 00:00,,,2005-03-22 08:00,2005-04-11 17:00,,,,,PT_Normal,,,,,42rv7UvZSw2vaeIe4/JLqA,,,,N,,,,,2007-02-01 02:42,2007-02-04 01:05,hbe4678,hbe4678,,,0
2056,12458237,14517,6816088,13330,1,100,N,N,N,CP_Units,TT_Task,DT_FixedDUR2,RV_OK,TK_Complete,PK000MJ22I,Eval Bids & Issue Recmd MJ201,,,,0,,0,,40,,,0,,2005-04-19 08:00,2005-04-21 17:00,2007-06-12 08:01,2007-06-12 08:01,,2007-01-27 00:00,2007-01-27 00:00,,,2005-04-19 08:00,2005-04-25 17:00,,,,,PT_Normal,,,,,wMoTF/U7SISL93kTHfocwg,,,,N,,,,,2007-02-01 02:42,2007-02-04 01:05,hbe4678,hbe4678,,,0
2057,12458238,14517,6816088,13330,1,100,N,N,N,CP_Units,TT_Task,DT_FixedDUR2,RV_OK,TK_Complete,PK000MJ22J,Final Negotiate/Interim Award - MJ201,,,,0,0,0,0,80,0,0,0,,2005-09-09 00:00,2005-09-30 00:00,2006-12-25 08:00,2006-12-25 08:00,,2007-01-27 00:00,2007-01-27 00:00,,,2005-08-29 08:00,2005-09-09 17:00,,,,,PT_Normal,,,,,1ktCAbvMQvuwPtVVT0Fjgw,,,,N,0,0,,,2007-02-01 02:42,2007-02-04 01:05,hbe4678,hbe4678,,,0
2058,12458239,14517,6816088,13330,1,0,N,N,N,CP_Units,TT_Task,DT_FixedDUR2,RV_OK,TK_Active,PK000MJ22K,MJ201 - Fabricate/PO Promise 101-J,,688.016666666667,0,80,0,0,0,2607.983333,0,0,0,,2005-09-30 00:00,,2007-05-29 08:01,2007-06-12 08:01,2007-02-09 17:00,2007-01-29 08:00,2007-02-09 17:00,2007-01-29 08:00,2007-02-09 17:00,2005-11-14 08:00,2007-02-14 16:59,,2007-05-29 08:01,2007-06-12 08:01,,PT_Normal,,,,,hrDPCTLRTe+7BHb87ZGbkw,,,,N,0,0,,,2007-02-01 02:42,2007-02-04 01:00,hbe4678,hbe4678,2007-01-29 08:00,2007-02-09 17:00,80
2059,12458240,14517,6816088,13330,1,100,N,N,N,CP_Units,TT_Task,DT_FixedDUR2,RV_OK,TK_Complete,PK000MJ22M,Requote/Bid Condition/Final Tab - MJ201,,,,0,0,0,,160,,0,0,,2005-04-11 08:00,2005-06-17 17:00,2006-12-25 08:00,2006-12-25 08:00,,2007-01-27 00:00,2007-01-27 00:00,,,2005-04-11 08:00,2005-05-06 17:00,,,,,PT_Normal,,,,,9tm4loIrSXCDePGUxJ0Q4A,,,,N,0,0,,,2007-02-01 02:42,2007-02-04 01:05,hbe4678,hbe4678,,,0
2060,12458241,14517,6816088,13330,1,100,N,N,N,CP_Units,TT_Task,DT_FixedDUR2,RV_OK,TK_Complete,PK000MJ22P,Issue Formal P.O. for  MJ201,,,,0,0,0,0,80,0,0,0,,2005-09-30 00:00,2005-11-15 00:00,2007-06-12 08:01,2007-06-12 08:01,,2007-01-27 00:00,2007-01-27 00:00,,,2005-10-03 08:00,2005-10-14 17:00,,,,,PT_Normal,,,,,fEwNnOH2QvOsaHauq0rE/g,,,,N,0,0,,,2007-02-01 02:42,2007-02-04 01:05,hbe4678,hbe4678,,,0
2061,12458242,14517,6816088,13330,1,100,N,N,N,CP_Units,TT_Task,DT_FixedDUR2,RV_OK,TK_Complete,PK000MJ31G,Issue MJ301 RFQ,,,,0,,0,,24,,,0,,2005-03-16 08:00,2005-03-23 17:00,2007-03-07 08:01,2007-03-07 08:01,,2007-01-27 00:00,2007-01-27 00:00,,,2005-03-16 08:00,2005-03-18 17:00,,,,,PT_Normal,,,,,69y11BZiTMetcE28ihDVHw,,,,N,,,,,2007-02-01 02:42,2007-02-04 01:05,hbe4678,hbe4678,,,0
2062,12458243,14517,6816088,13330,1,100,N,N,N,CP_Units,TT_Task,DT_FixedDUR2,RV_OK,TK_Complete,PK000MJ31H,Receive Quotes MJ301,,,,0,0,0,,120,,0,0,,2005-03-24 08:00,2005-05-12 00:00,2007-03-07 08:01,2007-03-07 08:01,,2007-01-27 00:00,2007-01-27 00:00,,,2005-03-24 08:00,2005-04-13 17:00,,,,,PT_Normal,,,,,aUXxui8ZQfCmGMeh0b89oA,,,,N,0,0,,,2007-02-01 02:42,2007-02-04 01:05,hbe4678,hbe4678,,,0
2063,12458244,14517,6816088,13330,1,100,N,N,N,CP_Units,TT_Task,DT_FixedDUR2,RV_OK,TK_Complete,PK000MJ31I,Eval Bids & Issue Recmd MJ301,,,,0,0,0,0,40,0,0,0,,2005-05-27 00:00,2005-06-03 00:00,2007-03-07 08:01,2007-03-07 08:01,,2007-01-27 00:00,2007-01-27 00:00,,,2005-06-27 08:00,2005-07-05 17:00,,,,,PT_Normal,,,,,XfvoB4c8ROqfbaHBo8WUNw,,,,N,0,0,,,2007-02-01 02:42,2007-02-04 01:05,hbe4678,hbe4678,,,0
2064,12458245,14517,6816088,13330,1,100,N,N,N,CP_Units,TT_Task,DT_FixedDUR2,RV_OK,TK_Complete,PK000MJ31J,Final Negotiate/Interim Award - MJ301,,,,0,0,0,0,88,0,0,0,,2005-09-09 00:00,2005-12-21 17:00,2007-03-07 08:01,2007-03-07 08:01,,2007-01-27 00:00,2007-01-27 00:00,,,2005-08-29 08:00,2005-09-12 17:00,,,,,PT_Normal,,,,,sNYXHbORRiuOIQQIavc39A,,,,N,0,0,,,2007-02-01 02:42,2007-02-04 01:05,hbe4678,hbe4678,,,0
2065,12458246,14517,6816088,13330,1,0,N,N,N,CP_Units,TT_Task,DT_FixedDUR2,RV_OK,TK_Active,PK000MJ31K,MJ301 - Fabricate/  PO Promise 104-J,,1344,0,200,0,0,0,2240,0,0,0,,2005-12-21 00:00,,2007-09-20 08:00,2007-10-24 17:00,2007-03-02 17:00,2007-01-29 08:00,2007-03-02 17:00,2007-01-29 08:00,2007-03-02 17:00,2005-12-19 08:00,2007-01-16 17:00,,2007-09-20 08:00,2007-10-24 17:00,,PT_Normal,,,,,yA2p2OEsRYyX1D1N0TSlbg,,,,N,0,0,,,2007-02-01 02:42,2007-02-01 02:43,hbe4678,hbe4678,2007-01-29 08:00,2007-03-02 17:00,200
2066,12458247,14517,6816088,13330,1,100,N,N,N,CP_Units,TT_Task,DT_FixedDUR2,RV_OK,TK_Complete,PK000MJ31M,Requote/Bid Condition/Final Tab - MJ301,,,,0,0,0,0,160,0,0,0,,2005-06-09 00:00,2005-08-25 00:00,2007-03-07 08:01,2007-03-07 08:01,,2007-01-27 00:00,2007-01-27 00:00,,,2005-07-06 08:00,2005-08-02 17:00,,,,,PT_Normal,,,,,HH30VplNQy2mTHb7dyXQnQ,,,,N,0,0,,,2007-02-01 02:42,2007-02-04 01:05,hbe4678,hbe4678,,,0
2067,12458248,14517,6816088,13330,1,0,N,N,N,CP_Units,TT_Task,DT_FixedDUR2,RV_OK,TK_NotStart,PK000MJ31O,MJ301 - Transport/Customes 104-J,,1344,0,240,0,0,0,240,0,0,0,,,,2007-11-26 08:00,2008-01-04 17:00,,2007-04-04 08:00,2007-05-15 17:00,2007-04-04 08:00,2007-05-15 17:00,2007-04-04 08:00,2007-05-15 17:00,,2007-11-26 08:00,2008-01-04 17:00,,PT_Normal,,,,,OW8S57ZuSQ+3uD4gxpXG4g,,,,N,0,0,,,2007-02-01 02:42,2007-02-01 02:43,hbe4678,hbe4678,2007-04-04 08:00,2007-05-15 17:00,240
2068,12458249,14517,6816088,13330,1,100,N,N,N,CP_Units,TT_Task,DT_FixedDUR2,RV_OK,TK_Complete,PK000MJ31P,Issue Formal P.O. for  MJ301,,,,0,0,0,0,80,0,0,0,,2005-12-21 00:00,2005-12-28 00:00,2007-10-24 17:00,2007-10-24 17:00,,2007-01-27 00:00,2007-01-27 00:00,,,2005-12-19 08:00,2006-01-03 17:00,,,,,PT_Normal,,,,,rgxXMHmXRDGcg5BKI69kjg,,,,N,0,0,,,2007-02-01 02:42,2007-02-04 01:05,hbe4678,hbe4678,,,0
2069,12458250,14517,6816088,13330,1,100,N,N,N,CP_Units,TT_Task,DT_FixedDUR2,RV_OK,TK_Complete,PK000MJ32G,Issue MJ302 RFQ,,,,0,,0,,24,,,0,,2005-03-16 08:00,2005-03-23 17:00,2007-01-09 08:01,2007-01-09 08:01,,2007-01-27 00:00,2007-01-27 00:00,,,2005-03-16 08:00,2005-03-18 17:00,,,,,PT_Normal,,,,,eg0TWBWwRViEPHVAWOQQbQ,,,,N,,,,,2007-02-01 02:42,2007-02-04 01:05,hbe4678,hbe4678,,,0
2070,12458251,14517,6816088,13330,1,100,N,N,N,CP_Units,TT_Task,DT_FixedDUR2,RV_OK,TK_Complete,PK000MJ21G,Issue MJ202 RFQ,,,,0,,0,,24,,,0,,2005-03-22 08:00,2005-03-22 17:00,2006-12-25 08:00,2006-12-25 08:00,,2007-01-27 00:00,2007-01-27 00:00,,,2005-03-22 08:00,2005-03-24 17:00,,,,,PT_Normal,,,,,UAunmTJvR720aLjZYmBKCQ,,,,N,,,,,2007-02-01 02:42,2007-02-04 01:05,hbe4678,hbe4678,,,0
2071,12458252,14517,6816088,13330,1,100,N,N,N,CP_Units,TT_Task,DT_FixedDUR2,RV_OK,TK_Complete,PK000MJ21H,Receive Quotes MJ202,,,,0,0,0,,120,,0,0,,2005-03-23 08:00,2005-04-26 00:00,2006-12-25 08:00,2006-12-25 08:00,,2007-01-27 00:00,2007-01-27 00:00,,,2005-03-23 08:00,2005-04-12 17:00,,,,,PT_Normal,,,,,+cpEo7ZuRk6ix2mb4TSmIA,,,,N,0,0,,,2007-02-01 02:42,2007-02-04 01:05,hbe4678,hbe4678,,,0
2072,12458253,14517,6816088,13330,1,100,N,N,N,CP_Units,TT_Task,DT_FixedDUR2,RV_OK,TK_Complete,PK000MJ21I,Eval Bids & Issue Recmd MJ202,,,,0,,0,,40,,,0,,2005-04-05 08:00,2005-04-05 17:00,2006-12-25 08:00,2006-12-25 08:00,,2007-01-27 00:00,2007-01-27 00:00,,,2005-04-05 08:00,2005-04-11 17:00,,,,,PT_Normal,,,,,sq5NuNsJQXqsZZ9An2W8Zg,,,,N,,,,,2007-02-01 02:42,2007-02-04 01:05,hbe4678,hbe4678,,,0
2073,12458254,14517,6816088,13330,1,100,N,N,N,CP_Units,TT_Task,DT_FixedDUR2,RV_OK,TK_Complete,PK000MJ21J,Final Negotiate/Interim Award - MJ202,,,,0,0,0,0,80,0,0,0,,2005-09-09 00:00,2005-09-09 00:00,2006-12-25 08:00,2006-12-25 08:00,,2007-01-27 00:00,2007-01-27 00:00,,,2005-08-29 08:00,2005-09-09 17:00,,,,,PT_Normal,,,,,5vjI1rsvT72A7pV4YnbYWw,,,,N,0,0,,,2007-02-01 02:42,2007-02-04 01:05,hbe4678,hbe4678,,,0
2074,12458255,14517,6816088,13330,1,100,N,N,N,CP_Units,TT_Task,DT_FixedDUR2,RV_OK,TK_Complete,PK000MJ21K,MJ202 - Fabricate/PO Promise 102/3/5-J,,,,0,0,0,0,2560,0,0,0,,2005-09-09 00:00,2006-09-15 00:00,2007-07-23 08:01,2007-07-23 08:01,,2007-01-27 00:00,2007-01-27 00:00,,,2005-09-12 08:00,2006-12-05 17:00,,,,,PT_Normal,,,,,eUBYNS3NR3qndC0VeznHPA,,,,N,0,0,,,2007-02-01 02:42,2007-02-04 01:05,hbe4678,hbe4678,,,0
2075,12458256,14517,6816088,13330,1,100,N,N,N,CP_Units,TT_Task,DT_FixedDUR2,RV_OK,TK_Complete,PK000MJ21M,Requote/Bid Condition/Final Tab - MJ202,,,,0,0,0,,160,,0,0,,2005-04-13 08:00,2005-06-01 00:00,2006-12-25 08:00,2006-12-25 08:00,,2007-01-27 00:00,2007-01-27 00:00,,,2005-04-13 08:00,2005-05-10 17:00,,,,,PT_Normal,,,,,H5wT3+VWQ4SSo31mEoPgHw,,,,N,0,0,,,2007-02-01 02:42,2007-02-04 01:05,hbe4678,hbe4678,,,0
2076,12458257,14517,6816088,13330,1,100,N,N,N,CP_Units,TT_Task,DT_FixedDUR2,RV_OK,TK_Complete,PK000MD47O,MD406 - Transport/DCustomes ISBL DRUMS,,,,0,0,0,0,240,0,0,0,,2006-08-16 00:00,2006-09-14 00:00,2007-12-09 08:01,2007-12-09 08:01,,2007-01-27 00:00,2007-01-27 00:00,,,2006-10-02 08:00,2006-11-10 17:00,,,,,PT_Normal,,,,,Z76VeVZOTpOBupcWyEzZDA,,,,N,0,0,,,2007-02-01 02:42,2007-02-04 01:05,hbe4678,hbe4678,,,0
2077,12458258,14517,6816088,13330,1,100,N,N,N,CP_Units,TT_Task,DT_FixedDUR2,RV_OK,TK_Complete,PK000MJ36G,Issue MJ306 RFQ,,,,0,,0,,24,,,0,,2005-04-04 08:00,2005-04-11 17:00,2007-05-04 17:00,2007-05-04 17:00,,2007-01-27 00:00,2007-01-27 00:00,,,2005-04-04 08:00,2005-04-06 17:00,,,,,PT_Normal,,,,,REbnr38ITxiV40ncsydY4g,,,,N,,,,,2007-02-01 02:42,2007-02-04 01:05,hbe4678,hbe4678,,,0
2078,12458259,14517,6816088,13330,1,100,N,N,N,CP_Units,TT_Task,DT_FixedDUR2,RV_OK,TK_Complete,PK000MJ36H,Receive Quotes MJ306,,,,0,0,0,,120,,0,0,,2005-04-12 08:00,2005-04-25 17:00,2007-05-04 17:00,2007-05-04 17:00,,2007-01-27 00:00,2007-01-27 00:00,,,2005-04-12 08:00,2005-05-02 17:00,,,,,PT_Normal,,,,,zymc+/n0S6O46uRABz0i0g,,,,N,0,0,,,2007-02-01 02:42,2007-02-04 01:05,hbe4678,hbe4678,,,0
2079,12458260,14517,6816088,13330,1,100,N,N,N,CP_Units,TT_Task,DT_FixedDUR2,RV_OK,TK_Complete,PK000MJ36I,Eval Bids & Issue Recmd MJ306,,,,0,0,0,0,40,0,0,0,,2005-05-06 08:00,2005-05-12 17:00,2007-05-04 17:00,2007-05-04 17:00,,2007-01-27 00:00,2007-01-27 00:00,,,2005-05-06 08:00,2005-05-12 17:00,,,,,PT_Normal,,,,,Vgicdk3fQIO5zj1RRW950w,,,,N,0,0,,,2007-02-01 02:42,2007-02-04 01:05,hbe4678,hbe4678,,,0
2080,12458261,14517,6816088,13330,1,100,N,N,N,CP_Units,TT_Task,DT_FixedDUR2,RV_OK,TK_Complete,PK000MJ36J,Final Negotiate/Interim Award - MJ306,,,,0,0,0,0,80,0,0,0,,2005-05-20 00:00,2005-06-02 00:00,2007-01-09 08:01,2007-01-09 08:01,,2007-01-27 00:00,2007-01-27 00:00,,,2005-09-26 08:00,2005-10-07 17:00,,,,,PT_Normal,,,,,PXiQCCT9Tyik93POpq+9Nw,,,,N,0,0,,,2007-02-01 02:42,2007-02-04 01:05,hbe4678,hbe4678,,,0
2081,12458262,14517,6816088,13330,1,0,N,N,N,CP_Units,TT_Task,DT_FixedDUR2,RV_OK,TK_Active,PK000MJ36K,MJ305 - Fabricate/PO Promise OSBL PUMPS,,480,0,80,0,0,0,2000,0,0,0,,2006-03-07 00:00,,2007-04-23 08:00,2007-05-04 17:00,,2007-01-29 08:00,2007-02-09 17:00,2007-01-29 08:00,2007-02-09 17:00,2006-03-06 08:00,2007-02-16 17:00,,2007-04-23 08:00,2007-05-04 17:00,,PT_Normal,,,,,2Ypj+mnkRAWBSI2gAkecaw,,,,N,0,0,,,2007-02-01 02:42,2007-02-01 02:43,hbe4678,hbe4678,2007-01-29 08:00,2007-02-09 17:00,80
2082,12458263,14517,6816088,13330,1,100,N,N,N,CP_Units,TT_Task,DT_FixedDUR2,RV_OK,TK_Complete,PK000MJ32H,Receive Quotes MJ302,,,,0,0,0,,120,,0,0,,2005-03-24 08:00,2005-05-12 17:00,2007-01-09 08:01,2007-01-09 08:01,,2007-01-27 00:00,2007-01-27 00:00,,,2005-03-24 08:00,2005-04-13 17:00,,,,,PT_Normal,,,,,m9lROX+9QHWnto6sZoLnaQ,,,,N,0,0,,,2007-02-01 02:42,2007-02-04 01:05,hbe4678,hbe4678,,,0
2083,12458264,14517,6816088,13330,1,100,N,N,N,CP_Units,TT_Task,DT_FixedDUR2,RV_OK,TK_Complete,PK000MJ32I,Eval Bids & Issue Recmd MJ302,,,,0,0,0,0,40,0,0,0,,2005-05-23 00:00,2005-06-03 00:00,2007-01-09 08:01,2007-01-09 08:01,,2007-01-27 00:00,2007-01-27 00:00,,,2005-06-27 08:00,2005-07-05 17:00,,,,,PT_Normal,,,,,ay6jP3zvTCKrSrvjXeExOA,,,,N,0,0,,,2007-02-01 02:42,2007-02-04 01:05,hbe4678,hbe4678,,,0
2084,12458265,14517,6816088,13330,1,100,N,N,N,CP_Units,TT_Task,DT_FixedDUR2,RV_OK,TK_Complete,PK000MJ32J,Final Negotiate/Interim Award - MJ302,,,,0,0,0,0,95.983333,0,0,0,,2005-09-09 00:00,2005-12-21 00:00,2007-01-09 08:01,2007-01-09 08:01,,2007-01-27 00:00,2007-01-27 00:00,,,2005-08-29 08:00,2005-09-13 16:59,,,,,PT_Normal,,,,,SQEj42fAQRSJ8NLlNpoe6w,,,,N,0,0,,,2007-02-01 02:42,2007-02-04 01:05,hbe4678,hbe4678,,,0
2085,12458266,14517,6816088,13330,1,0,N,N,N,CP_Units,TT_Task,DT_FixedDUR2,RV_OK,TK_Active,PK000MJ32K,MJ302 - Fabricate/PO Promise 107-JA/JB/JC,,1400,0,120,0,0,0,2240,0,0,0,,2005-12-21 00:00,,2007-10-01 08:00,2007-10-19 17:00,2007-02-16 17:00,2007-01-29 08:00,2007-02-16 17:00,2007-01-29 08:00,2007-02-16 17:00,2005-12-19 08:00,2007-01-16 17:00,,2007-10-01 08:00,2007-10-19 17:00,,PT_Normal,,,,,65itza3GSHyjpp+QCm4ZpQ,,,,N,0,0,,,2007-02-01 02:42,2007-02-01 02:43,hbe4678,hbe4678,2007-01-29 08:00,2007-02-16 17:00,120
2086,12458267,14517,6816088,13330,1,100,N,N,N,CP_Units,TT_Task,DT_FixedDUR2,RV_OK,TK_Complete,PK000MJ32M,Requote/Bid Condition/Final Tab - MJ302,,,,0,0,0,0,160,0,0,0,,2005-06-09 00:00,2005-08-16 00:00,2007-01-09 08:01,2007-01-09 08:01,,2007-01-27 00:00,2007-01-27 00:00,,,2005-07-05 08:00,2005-08-01 17:00,,,,,PT_Normal,,,,,rX9Q9Kn0TWGPuFtaqPAnhA,,,,N,0,0,,,2007-02-01 02:42,2007-02-04 01:05,hbe4678,hbe4678,,,0
2087,12458268,14517,6816088,13330,1,0,N,N,N,CP_Units,TT_Task,DT_FixedDUR2,RV_OK,TK_NotStart,PK000MJ32O,MJ302 - Transport/Customes 107-JA/JB/JC,,1400,0,120,0,0,0,240,0,0,0,,,,2007-11-12 08:00,2007-11-30 17:00,,2007-03-12 08:00,2007-03-30 17:00,2007-03-12 08:00,2007-03-30 17:00,2007-03-12 08:00,2007-04-20 17:00,,2007-11-12 08:00,2007-11-30 17:00,,PT_Normal,,,,,mXmCZqFNS6eJzvQDBLgoJg,,,,N,0,0,,,2007-02-01 02:42,2007-02-01 02:43,hbe4678,hbe4678,2007-03-12 08:00,2007-03-30 17:00,120
2088,12458269,14517,6816088,13330,1,100,N,N,N,CP_Units,TT_Task,DT_FixedDUR2,RV_OK,TK_Complete,PK000MJ32P,Issue Formal P.O. for  MJ302,,,,0,0,0,0,80,0,0,0,,2005-12-05 08:00,2005-12-28 00:00,2007-10-19 17:00,2007-10-19 17:00,,2007-01-27 00:00,2007-01-27 00:00,,,2005-12-05 08:00,2005-12-16 17:00,,,,,PT_Normal,,,,,t32uz2YkSNawNVmtM4GGAw,,,,N,0,0,,,2007-02-01 02:42,2007-02-04 01:05,hbe4678,hbe4678,,,0
2089,12458270,14517,6816088,13330,1,100,N,N,N,CP_Units,TT_Task,DT_FixedDUR2,RV_OK,TK_Complete,PK000MJ33G,Issue MJ303 RFQ,,,,0,0,0,0,24,0,0,0,,2005-07-19 08:00,2005-07-22 00:00,2007-03-07 08:00,2007-03-07 08:00,,2007-01-27 00:00,2007-01-27 00:00,,,2005-07-19 08:00,2005-07-21 17:00,,,,,PT_Normal,,,,,Hk1awyeHR1Wl2/EFZW5SLA,,,,N,0,0,,,2007-02-01 02:42,2007-02-04 01:05,hbe4678,hbe4678,,,0
2090,12458271,14517,6816088,13330,1,100,N,N,N,CP_Units,TT_Task,DT_FixedDUR2,RV_OK,TK_Complete,PK000MJ33H,Receive Quotes MJ303,,,,0,0,0,0,176,0,0,0,,2005-07-22 08:00,2005-09-29 00:00,2007-03-07 08:00,2007-03-07 08:00,,2007-01-27 00:00,2007-01-27 00:00,,,2005-07-22 08:00,2005-08-22 17:00,,,,,PT_Normal,,,,,+V+F9i9oQGKMcYpTW2v4/A,,,,N,0,0,,,2007-02-01 02:42,2007-02-04 01:05,hbe4678,hbe4678,,,0
2091,12458272,14517,6816088,13330,1,100,N,N,N,CP_Units,TT_Task,DT_FixedDUR2,RV_OK,TK_Complete,PK000MJ33I,Eval Bids & Issue Recmd MJ303,,,,0,0,0,0,40,0,0,0,,2006-01-19 00:00,2006-01-24 00:00,2007-03-07 08:00,2007-03-07 08:00,,2007-01-27 00:00,2007-01-27 00:00,,,2006-01-23 08:00,2006-01-27 17:00,,,,,PT_Normal,,,,,o66cYW0pTDOFVf7xrRjCUA,,,,N,0,0,,,2007-02-01 02:42,2007-02-04 01:05,hbe4678,hbe4678,,,0
2092,12458273,14517,6816088,13330,1,0,N,N,N,CP_Units,TT_Task,DT_FixedDUR2,RV_OK,TK_Active,PK000MJ33K,MJ303 - Fabricate/PO Promise CW PUMPS,,216,0,360,0,0,0,2080,0,0,0,,2006-02-03 00:00,,2007-03-07 08:00,2007-05-08 17:00,2007-03-30 17:00,2007-01-29 08:00,2007-03-30 17:00,2007-01-29 08:00,2007-03-30 17:00,2006-01-30 08:00,2007-01-26 17:00,,2007-03-07 08:00,2007-05-08 17:00,,PT_Normal,,,,,CyGVoL8aTiKLt/zNlzMDAw,,,,N,0,0,,,2007-02-01 02:42,2007-02-01 02:43,hbe4678,hbe4678,2007-01-29 08:00,2007-03-30 17:00,360
2093,12458274,14517,6816088,13330,1,0,N,N,N,CP_Units,TT_Task,DT_FixedDUR2,RV_OK,TK_NotStart,PK000MJ33O,MJ303 - Transport/Customes CW PUMPS,,216,0,240,0,0,0,240,0,0,0,,,,2007-05-28 08:00,2007-07-06 17:00,,2007-04-19 08:00,2007-05-30 17:00,2007-04-19 08:00,2007-05-30 17:00,2007-04-19 08:00,2007-05-30 17:00,,2007-05-28 08:00,2007-07-06 17:00,,PT_Normal,,,,,KF1hHtPCSayLEcilQ8xbDw,,,,N,0,0,,,2007-02-01 02:42,2007-02-01 02:43,hbe4678,hbe4678,2007-04-19 08:00,2007-05-30 17:00,240
2094,12458275,14517,6816088,13330,1,100,N,N,N,CP_Units,TT_Task,DT_FixedDUR2,RV_OK,TK_Complete,PK000MJ34G,Issue MJ304 RFQ,,,,0,0,0,0,24,0,0,0,,2005-05-27 08:00,2005-05-31 00:00,2007-11-02 17:00,2007-11-02 17:00,,2007-01-27 00:00,2007-01-27 00:00,,,2005-05-27 08:00,2005-06-01 17:00,,,,,PT_Normal,,,,,KlbTS2hbSJSVUF/hfh35sg,,,,N,0,0,,,2007-02-01 02:42,2007-02-04 01:05,hbe4678,hbe4678,,,0
2095,12458276,14517,6816088,13330,1,100,N,N,N,CP_Units,TT_Task,DT_FixedDUR2,RV_OK,TK_Complete,PK000MJ34H,Receive Quotes MJ304,,,,0,0,0,0,120,0,0,0,,2005-06-01 00:00,2005-06-01 00:00,2007-11-02 17:00,2007-11-02 17:00,,2007-01-27 00:00,2007-01-27 00:00,,,2005-06-03 08:00,2005-06-23 17:00,,,,,PT_Normal,,,,,lrImVyXeRzyi+Ea8hMwBhw,,,,N,0,0,,,2007-02-01 02:42,2007-02-04 01:05,hbe4678,hbe4678,,,0
2096,12458277,14517,6816088,13330,1,100,N,N,N,CP_Units,TT_Task,DT_FixedDUR2,RV_OK,TK_Complete,PK000MJ34I,Eval Bids & Issue Recmd MJ304,,,,0,0,0,0,40,0,0,0,,2005-06-06 00:00,2005-06-10 00:00,2007-11-02 17:00,2007-11-02 17:00,,2007-01-27 00:00,2007-01-27 00:00,,,2005-07-05 08:00,2005-07-11 17:00,,,,,PT_Normal,,,,,waD1XwDBTnCuwReGQpqcJw,,,,N,0,0,,,2007-02-01 02:42,2007-02-04 01:05,hbe4678,hbe4678,,,0
2097,12458278,14517,6816088,13330,1,100,N,N,N,CP_Units,TT_Task,DT_FixedDUR2,RV_OK,TK_Complete,PK000MJ34J,Final Negotiate/Interim Award - MJ304,,,,0,0,0,0,120,0,0,0,,2005-10-10 00:00,2005-11-14 00:00,2006-12-25 08:00,2006-12-25 08:00,,2007-01-27 00:00,2007-01-27 00:00,,,2005-10-17 08:00,2005-11-04 17:00,,,,,PT_Normal,,,,,ZCuUoF9lTMSi7FzlhgGU4g,,,,N,0,0,,,2007-02-01 02:42,2007-02-04 01:05,hbe4678,hbe4678,,,0
2098,12458279,14517,6816088,13330,1,0,N,N,N,CP_Units,TT_Task,DT_FixedDUR2,RV_OK,TK_Active,PK000MJ34K,MJ304 - Fabricate/PO Promise MP BFW PUMPS,,1488,0,112,0,0,0,2000,0,0,0,,2005-11-14 08:00,,2007-10-16 08:00,2007-11-02 17:00,2007-02-15 17:00,2007-01-29 08:00,2007-02-15 17:00,2007-01-29 08:00,2007-02-15 17:00,2005-11-14 08:00,2006-10-31 17:00,,2007-10-16 08:00,2007-11-02 17:00,,PT_Normal,,,,,IifDsImxSmuE8JTHtIYOPQ,,,,N,0,0,,,2007-02-01 02:42,2007-02-01 02:43,hbe4678,hbe4678,2007-01-29 08:00,2007-02-15 17:00,112
2099,12458280,14517,6816088,13330,1,100,N,N,N,CP_Units,TT_Task,DT_FixedDUR2,RV_OK,TK_Complete,PK000MJ21O,MJ202 - Transport/Customes 102/3/5-J,,,,0,0,0,0,240,0,0,0,,2006-12-01 08:00,2006-12-15 17:00,2007-07-23 08:01,2007-07-23 08:01,,2007-01-27 00:00,2007-01-27 00:00,,,2006-12-01 08:00,2007-01-11 17:00,,,,,PT_Normal,,,,,03FgvPBRThGpxLyQdvgsqA,,,,N,0,0,,,2007-02-01 02:42,2007-02-04 01:05,hbe4678,hbe4678,,,0
2100,12458281,14517,6816088,13330,1,100,N,N,N,CP_Units,TT_Task,DT_FixedDUR2,RV_OK,TK_Complete,PK000MJ37J,Final Negotiate/Interim Award - MJ340,,,,0,0,0,0,32,0,0,0,,2005-11-18 00:00,2006-01-13 00:00,2007-02-07 08:01,2007-02-07 08:01,,2007-01-27 00:00,2007-01-27 00:00,,,2005-11-14 08:00,2005-11-17 17:00,,,,,PT_Normal,,,,,+SNShTvQT/q3EAcLy8EKJw,,,,N,0,0,,,2007-02-01 02:42,2007-02-04 01:05,hbe4678,hbe4678,,,0
2101,12458282,14517,6816088,13330,1,100,N,N,N,CP_Units,TT_Task,DT_FixedDUR2,RV_OK,TK_Complete,PK000MJ37K,MJ340 - Fabricate/PO Promise METERING PUMPS,,,,0,0,0,0,1120,0,0,0,,2006-01-13 00:00,2006-08-01 00:00,2008-01-03 08:01,2008-01-03 08:01,,2007-01-27 00:00,2007-01-27 00:00,,,2006-02-27 08:00,2006-09-08 17:00,,,,,PT_Normal,,,,,MTHyYqKGQBucRYP92ek9Ng,,,,N,0,0,,,2007-02-01 02:42,2007-02-04 01:05,hbe4678,hbe4678,,,0
2102,12458283,14517,6816088,13330,1,100,N,N,N,CP_Units,TT_Task,DT_FixedDUR2,RV_OK,TK_Complete,PK000MJ37O,MJ340 - Transport/Customes METERING PUMPS,,,,0,0,0,0,240,0,0,0,,2006-09-08 00:00,2006-11-07 00:00,2008-01-03 08:01,2008-01-03 08:01,,2007-01-27 00:00,2007-01-27 00:00,,,2006-11-06 08:00,2006-12-15 17:00,,,,,PT_Normal,,,,,QF/3VZAcRxWr3RLTKo3ffQ,,,,N,0,0,,,2007-02-01 02:42,2007-02-04 01:05,hbe4678,hbe4678,,,0
2103,12458284,14517,6816088,13330,1,100,N,N,N,CP_Units,TT_Task,DT_FixedDUR2,RV_OK,TK_Complete,PK000MJ37P,Issue Formal P.O. for  MJ340,,,,0,0,0,0,80,0,0,0,,2006-01-13 00:00,2006-02-20 00:00,2008-01-03 08:01,2008-01-03 08:01,,2007-01-27 00:00,2007-01-27 00:00,,,2006-01-30 08:01,2006-02-13 08:01,,,,,PT_Normal,,,,,cx8OHUWlSSC3G5TZlZxnvQ,,,,N,0,0,,,2007-02-01 02:42,2007-02-04 01:05,hbe4678,hbe4678,,,0
2104,12458285,14517,6816088,13330,1,100,N,N,N,CP_Units,TT_Task,DT_FixedDUR2,RV_OK,TK_Complete,PK000MJ39G,Issue MJ391/MJ392 RFQ,,,,0,,0,,24,,,0,,2005-04-08 08:00,2005-04-08 17:00,2007-02-07 08:01,2007-02-07 08:01,,2007-01-27 00:00,2007-01-27 00:00,,,2005-04-08 08:00,2005-04-12 17:00,,,,,PT_Normal,,,,,fvYPzg8lRxqRAvxKZi746w,,,,N,,,,,2007-02-01 02:42,2007-02-04 01:05,hbe4678,hbe4678,,,0
2105,12458286,14517,6816088,13330,1,100,N,N,N,CP_Units,TT_Task,DT_FixedDUR2,RV_OK,TK_Complete,PK000MJ39H,Receive Quotes MJ391/MJ392,,,,0,0,0,,120,,0,0,,2005-04-11 08:00,2005-05-09 17:00,2007-02-07 08:01,2007-02-07 08:01,,2007-01-27 00:00,2007-01-27 00:00,,,2005-04-11 08:00,2005-04-29 17:00,,,,,PT_Normal,,,,,2xO35Jg5TiC+qcxKmKuW7g,,,,N,0,0,,,2007-02-01 02:42,2007-02-04 01:05,hbe4678,hbe4678,,,0
2106,12458287,14517,6816088,13330,1,100,N,N,N,CP_Units,TT_Task,DT_FixedDUR2,RV_OK,TK_Complete,PK000MJ39I,Eval Bids & Issue Recmd MJ391/MJ392,,,,0,0,0,0,40,0,0,0,,2006-01-20 00:00,2006-04-14 00:00,2007-02-07 08:01,2007-02-07 08:01,,2007-01-27 00:00,2007-01-27 00:00,,,2006-01-16 08:00,2006-01-20 17:00,,,,,PT_Normal,,,,,XexGiUeOSrSZoTPEmFsmmg,,,,N,0,0,,,2007-02-01 02:42,2007-02-04 01:05,hbe4678,hbe4678,,,0
2107,12458288,14517,6816088,13330,1,100,N,N,N,CP_Units,TT_Task,DT_FixedDUR2,RV_OK,TK_Complete,PK000MJ39J,Final Negotiate/Interim Award - MJ391/MJ392,,,,0,0,0,0,48,0,0,0,,2006-04-14 00:00,2006-04-17 00:00,2007-02-07 08:01,2007-02-07 08:01,,2007-01-27 00:00,2007-01-27 00:00,,,2006-04-18 08:00,2006-04-25 17:00,,,,,PT_Normal,,,,,hoiCYZccQDSDGb1akTjcew,,,,N,0,0,,,2007-02-01 02:42,2007-02-04 01:05,hbe4678,hbe4678,,,0
2108,12458289,14517,6816088,13330,1,0,N,N,N,CP_Units,TT_Task,DT_FixedDUR2,RV_OK,TK_Active,PK000MJ39K,Fabricate/Exworks FIREWATER PUMPS,,480,0,80,0,0,0,1600,0,0,0,,2006-04-17 08:00,,2007-04-23 08:00,2007-05-04 17:00,2007-02-09 17:00,2007-01-29 08:00,2007-02-09 17:00,2007-01-29 08:00,2007-02-09 17:00,2006-04-17 08:00,2007-01-19 17:00,,2007-04-23 08:00,2007-05-04 17:00,,PT_Normal,,,,,ymN+tnA9QIKHj+A1rSfhkg,,,,N,0,0,,,2007-02-01 02:42,2007-02-01 02:43,hbe4678,hbe4678,2007-01-29 08:00,2007-02-09 17:00,80
2109,12458290,14517,6816088,13330,1,100,N,N,N,CP_Units,TT_Task,DT_FixedDUR2,RV_OK,TK_Complete,PK000MJ39M,Requote/Bid Condition/Final Tab - MJ391/MJ392,,,,0,0,0,0,80,0,0,0,,2005-05-30 00:00,2006-01-20 00:00,2007-02-07 08:01,2007-02-07 08:01,,2007-01-27 00:00,2007-01-27 00:00,,,2005-06-03 08:00,2005-06-16 17:00,,,,,PT_Normal,,,,,kFUEX1ZIR+Grb3s6mvr32g,,,,N,0,0,,,2007-02-01 02:42,2007-02-04 01:05,hbe4678,hbe4678,,,0
2110,12458291,14517,6816088,13330,1,0,N,N,N,CP_Units,TT_Task,DT_FixedDUR2,RV_OK,TK_NotStart,PK000MJ39O,Transport/Customes FIREWATER PUMPS,,480,0,240,0,0,0,240,0,0,0,,,,2007-05-28 08:00,2007-07-06 17:00,,2007-03-05 08:00,2007-04-13 17:00,2007-03-05 08:00,2007-04-13 17:00,2007-03-05 08:00,2007-04-13 17:00,,2007-05-28 08:00,2007-07-06 17:00,,PT_Normal,,,,,gc51e3L8TrOhY4HNYHIohg,,,,N,0,0,,,2007-02-01 02:42,2007-02-01 02:43,hbe4678,hbe4678,2007-03-05 08:00,2007-04-13 17:00,240
2111,12458292,14517,6816088,13330,1,100,N,N,N,CP_Units,TT_Task,DT_FixedDUR2,RV_OK,TK_Complete,PK000MJ39P,Issue Formal P.O. for  MJ391/MJ392,,,,0,0,0,0,80,0,0,0,,2006-04-17 00:00,2006-07-20 00:00,2007-05-04 17:00,2007-05-04 17:00,,2007-01-27 00:00,2007-01-27 00:00,,,2006-05-08 08:00,2006-05-19 17:00,,,,,PT_Normal,,,,,qKER9KnGR3GXGu7dAvrK4A,,,,N,0,0,,,2007-02-01 02:42,2007-02-04 01:05,hbe4678,hbe4678,,,0
2112,12458293,14517,6816088,13330,1,100,N,N,N,CP_Units,TT_Task,DT_FixedDUR2,RV_OK,TK_Complete,PK000MJ73G,Issue MJ730 RFQ,,,,0,0,0,0,24,0,0,0,,2005-07-11 00:00,2005-07-18 00:00,2007-02-07 08:01,2007-02-07 08:01,,2007-01-27 00:00,2007-01-27 00:00,,,2005-07-11 08:00,2005-07-13 17:00,,,,,PT_Normal,,,,,PY02hLB4TcOMoP6KSoQQTA,,,,N,0,0,,,2007-02-01 02:42,2007-02-04 01:05,hbe4678,hbe4678,,,0
2113,12458294,14517,6816088,13330,1,100,N,N,N,CP_Units,TT_Task,DT_FixedDUR2,RV_OK,TK_Complete,PK000MJ73H,Receive Quotes MJ730,,,,0,0,0,0,160,0,0,0,,2005-07-19 00:00,2005-09-06 00:00,2007-02-07 08:01,2007-02-07 08:01,,2007-01-27 00:00,2007-01-27 00:00,,,2005-07-14 08:00,2005-08-10 17:00,,,,,PT_Normal,,,,,9/BVDzJQQwyAX9qkI7hEpQ,,,,N,0,0,,,2007-02-01 02:42,2007-02-04 01:05,hbe4678,hbe4678,,,0
2114,12458295,14517,6816088,13330,1,0,N,N,N,CP_Units,TT_Task,DT_FixedDUR2,RV_OK,TK_NotStart,PK000MJ34O,MJ304 - Transport/Customes MP BFW PUMPS,,1488,0,240,0,0,0,240,0,0,0,,,,2007-11-26 08:00,2008-01-04 17:00,,2007-03-09 08:00,2007-04-19 17:00,2007-03-09 08:00,2007-04-19 17:00,2007-03-09 08:00,2007-04-19 17:00,,2007-11-26 08:00,2008-01-04 17:00,,PT_Normal,,,,,OJmBgQyVRKCAQ55KmuWyQQ,,,,N,0,0,,,2007-02-01 02:42,2007-02-01 02:43,hbe4678,hbe4678,2007-03-09 08:00,2007-04-19 17:00,240
2115,12458296,14517,6816088,13330,1,100,N,N,N,CP_Units,TT_Task,DT_FixedDUR2,RV_OK,TK_Complete,PK000MJ34P,Issue Formal P.O. for  MJ304,,,,0,0,0,0,24,0,0,0,,2005-11-29 08:00,2005-12-23 00:00,2007-11-02 17:00,2007-11-02 17:00,,2007-01-27 00:00,2007-01-27 00:00,,,2005-12-19 08:00,2005-12-21 17:00,,,,,PT_Normal,,,,,/lsafKt4QRif4gNgBDKF/A,,,,N,0,0,,,2007-02-01 02:42,2007-02-04 01:05,hbe4678,hbe4678,,,0
2116,12458297,14517,6816088,13330,1,100,N,N,N,CP_Units,TT_Task,DT_FixedDUR2,RV_OK,TK_Complete,PK000MJ35G,Issue MJ305 RFQ,,,,0,,0,,24,,,0,,2005-04-04 08:00,2005-04-11 17:00,2007-08-30 08:00,2007-08-30 08:00,,2007-01-27 00:00,2007-01-27 00:00,,,2005-04-04 08:00,2005-04-06 17:00,,,,,PT_Normal,,,,,lqFsYxc1TS6cLbBrIY9IQw,,,,N,,,,,2007-02-01 02:42,2007-02-04 01:05,hbe4678,hbe4678,,,0
2117,12458298,14517,6816088,13330,1,100,N,N,N,CP_Units,TT_Task,DT_FixedDUR2,RV_OK,TK_Complete,PK000MJ35H,Receive Quotes MJ305,,,,0,0,0,,120,,0,0,,2005-04-12 08:00,2005-04-25 17:00,2007-08-30 08:00,2007-08-30 08:00,,2007-01-27 00:00,2007-01-27 00:00,,,2005-04-12 08:00,2005-05-02 17:00,,,,,PT_Normal,,,,,QZEwjCrWSmaLFo8cJQhOow,,,,N,0,0,,,2007-02-01 02:42,2007-02-04 01:05,hbe4678,hbe4678,,,0
2118,12458299,14517,6816088,13330,1,100,N,N,N,CP_Units,TT_Task,DT_FixedDUR2,RV_OK,TK_Complete,PK000MJ35I,Eval Bids & Issue Recmd MJ305,,,,0,0,0,0,40,0,0,0,,2005-04-26 00:00,2005-06-02 00:00,2007-08-30 08:00,2007-08-30 08:00,,2007-01-27 00:00,2007-01-27 00:00,,,2005-04-26 13:00,2005-05-03 12:00,,,,,PT_Normal,,,,,INPsm4roTU2iKf6zpYo9QA,,,,N,0,0,,,2007-02-01 02:42,2007-02-04 01:05,hbe4678,hbe4678,,,0
2119,12458300,14517,6816088,13330,1,100,N,N,N,CP_Units,TT_Task,DT_FixedDUR2,RV_OK,TK_Complete,PK000MJ35J,Final Negotiate/Interim Award - MJ305,,,,0,0,0,0,80,0,0,0,,2005-06-02 00:00,2005-09-22 17:00,2007-01-09 08:01,2007-01-09 08:01,,2007-01-27 00:00,2007-01-27 00:00,,,2005-08-29 08:00,2005-09-09 17:00,,,,,PT_Normal,,,,,aZ9pfnlFT5mH9Pq9lyEWww,,,,N,0,0,,,2007-02-01 02:42,2007-02-04 01:05,hbe4678,hbe4678,,,0
2120,12458301,14517,6816088,13330,1,100,N,N,N,CP_Units,TT_Task,DT_FixedDUR2,RV_OK,TK_Complete,PK000MJ35K,MJ305 - Fabricate/PO Promise ISBL ANSI/API PUMPS,,,,0,0,0,0,1600,0,0,0,,2005-09-23 00:00,2006-11-15 00:00,2007-08-30 08:00,2007-08-30 08:00,,2007-01-27 00:00,2007-01-27 00:00,,,2005-10-17 08:00,2006-07-25 17:00,,,,,PT_Normal,,,,,xhBDRpFpQISyw9x+x7pl/Q,,,,N,0,0,,,2007-02-01 02:42,2007-02-04 01:05,hbe4678,hbe4678,,,0
2121,12458302,14517,6816088,13330,1,0,N,N,N,CP_Units,TT_Task,DT_FixedDUR2,RV_OK,TK_NotStart,PK000MJ35O,MJ305 - Transport/Customes ISBL ANSI/API PUMPS,,1224,0,240,0,0,0,240,0,0,0,,,,2007-10-15 08:00,2007-11-23 17:00,,2007-03-14 08:00,2007-04-24 17:00,2007-03-14 08:00,2007-04-24 17:00,2007-03-14 08:00,2007-04-24 17:00,,2007-10-15 08:00,2007-11-23 17:00,,PT_Normal,,,,,8v1LzA4+QfCRhOzyYqqsCQ,,,,N,0,0,,,2007-02-01 02:42,2007-02-01 02:43,hbe4678,hbe4678,2007-03-14 08:00,2007-04-24 17:00,240
2122,12458303,14517,6816088,13330,1,100,N,N,N,CP_Units,TT_Task,DT_FixedDUR2,RV_OK,TK_Complete,PK000MJ35P,Issue Formal P.O. for  MJ305,,,,0,0,0,0,80,0,0,0,,2005-09-22 00:00,2006-03-07 00:00,2007-04-24 08:01,2007-04-24 08:01,,2007-01-27 00:00,2007-01-27 00:00,,,2005-09-26 08:00,2005-10-07 17:00,,,,,PT_Normal,,,,,xXMNVFmqTJaNG0L85vZeAA,,,,N,0,0,,,2007-02-01 02:42,2007-02-04 01:05,hbe4678,hbe4678,,,0
2123,12458304,14517,6816088,13330,1,100,N,N,N,CP_Units,TT_Task,DT_FixedDUR2,RV_OK,TK_Complete,PK000ML42P,Issue Formal P.O. for  ML420,,,,0,0,0,0,80,0,0,0,,2005-11-11 00:00,2005-11-30 00:00,2007-11-03 08:01,2007-11-03 08:01,,2007-01-27 00:00,2007-01-27 00:00,,,2005-11-29 08:00,2005-12-12 17:00,,,,,PT_Normal,,,,,Cax1R1+sSi6T1K6fFFYIIg,,,,N,0,0,,,2007-02-01 02:42,2007-02-04 01:05,hbe4678,hbe4678,,,0
2124,12458305,14517,6816088,13330,1,100,N,N,N,CP_Units,TT_Task,DT_FixedDUR2,RV_OK,TK_Complete,PK000ML43G,Issue ML430 RFQ,,,,0,0,0,0,24,0,0,0,,2005-07-19 00:00,2005-07-22 17:00,2007-03-07 08:01,2007-03-07 08:01,,2007-01-27 00:00,2007-01-27 00:00,,,2005-07-20 08:00,2005-07-22 17:00,,,,,PT_Normal,,,,,vUYLv0ziTmmX9TrTlnf0zg,,,,N,0,0,,,2007-02-01 02:42,2007-02-04 01:05,hbe4678,hbe4678,,,0
2125,12458306,14517,6816088,13330,1,100,N,N,N,CP_Units,TT_Task,DT_FixedDUR2,RV_OK,TK_Complete,PK000MJ73I,Eval Bids & Issue Recmd MJ730,,,,0,0,0,0,120,0,0,0,,2005-09-06 00:00,2005-11-18 17:00,2007-05-07 08:01,2007-05-07 08:01,,2007-01-27 00:00,2007-01-27 00:00,,,2005-10-24 08:00,2005-11-11 17:00,,,,,PT_Normal,,,,,cUS/rcF7SQuFX+Hh2qoArA,,,,N,0,0,,,2007-02-01 02:42,2007-02-04 01:05,hbe4678,hbe4678,,,0
2126,12458307,14517,6816088,13330,1,100,N,N,N,CP_Units,TT_Task,DT_FixedDUR2,RV_OK,TK_Complete,PK000MJ73J,Final Negotiate/Interim Award - MJ730,,,,0,0,0,0,24,0,0,0,,2005-11-18 00:00,2005-12-12 00:00,2007-05-07 08:01,2007-05-07 08:01,,2007-01-27 00:00,2007-01-27 00:00,,,2005-11-14 08:00,2005-11-16 17:00,,,,,PT_Normal,,,,,4wFsYWdgTNeNJyKer96SPg,,,,N,0,0,,,2007-02-01 02:42,2007-02-04 01:05,hbe4678,hbe4678,,,0
2127,12458308,14517,6816088,13330,1,0,N,N,N,CP_Units,TT_Task,DT_FixedDUR2,RV_OK,TK_Active,PK000MJ73K,MJ730 - Fabricate/PO Promise EMERG PWR GENERATOR,,560.016666666667,0,360,0,0,0,1120,0,0,0,,2006-01-24 08:00,,2007-05-07 08:01,2007-07-09 08:01,2007-03-30 17:00,2007-01-29 08:00,2007-03-30 17:00,2007-01-29 08:00,2007-03-30 17:00,2005-12-06 08:00,2006-06-21 17:00,,2007-05-07 08:01,2007-07-09 08:01,,PT_Normal,,,,,ZNP9FCCJRrSI7d7JzdPDqw,,,,N,0,0,,,2007-02-01 02:42,2007-02-04 01:00,hbe4678,hbe4678,2007-01-29 08:00,2007-03-30 17:00,360
2128,12458309,14517,6816088,13330,1,0,N,N,N,CP_Units,TT_Task,DT_FixedDUR2,RV_OK,TK_NotStart,PK000MJ73O,MJ730 - Transport/Customes EMERG PWR GENERATOR,,560.016666666667,0,240,0,0,0,240,0,0,0,,,,2007-07-16 08:01,2007-08-27 08:01,,2007-04-09 08:00,2007-05-18 17:00,2007-04-09 08:00,2007-05-18 17:00,2007-04-09 08:00,2007-05-18 17:00,,2007-07-16 08:01,2007-08-27 08:01,,PT_Normal,,,,,O+HyoeYoQqKm4YuKvFVwgw,,,,N,0,0,,,2007-02-01 02:42,2007-02-04 01:00,hbe4678,hbe4678,2007-04-09 08:00,2007-05-18 17:00,240
2129,12458310,14517,6816088,13330,1,100,N,N,N,CP_Units,TT_Task,DT_FixedDUR2,RV_OK,TK_Complete,PK000MJ73P,Issue Formal P.O. for  MJ730,,,,0,0,0,0,80,0,0,0,,2005-12-12 00:00,2005-12-12 00:00,2007-07-09 08:01,2007-07-09 08:01,,2007-01-27 00:00,2007-01-27 00:00,,,2005-12-08 08:00,2005-12-21 17:00,,,,,PT_Normal,,,,,0pqKPTIISnSS9xb3duvzOg,,,,N,0,0,,,2007-02-01 02:42,2007-02-04 01:05,hbe4678,hbe4678,,,0
2130,12458311,14517,6816088,13330,1,100,N,N,N,CP_Units,TT_Task,DT_FixedDUR2,RV_OK,TK_Complete,PK000MJ75G,Issue MJ750 RFQ,,,,0,0,0,0,24,0,0,0,,2005-06-27 00:00,2005-06-28 00:00,2007-01-09 08:01,2007-01-09 08:01,,2007-01-27 00:00,2007-01-27 00:00,,,2005-06-28 08:00,2005-06-30 17:00,,,,,PT_Normal,,,,,nh1uGQO0R26sCWS6/mANuQ,,,,N,0,0,,,2007-02-01 02:42,2007-02-04 01:05,hbe4678,hbe4678,,,0
2131,12458312,14517,6816088,13330,1,100,N,N,N,CP_Units,TT_Task,DT_FixedDUR2,RV_OK,TK_Complete,PK000MJ75H,Receive Quotes MJ750,,,,0,0,0,0,120,0,0,0,,2005-06-28 00:00,2005-06-29 00:00,2007-01-09 08:01,2007-01-09 08:01,,2007-01-27 00:00,2007-01-27 00:00,,,2005-07-05 08:00,2005-07-25 17:00,,,,,PT_Normal,,,,,nW8nUJfNQT2BKlZufVuDDg,,,,N,0,0,,,2007-02-01 02:42,2007-02-04 01:05,hbe4678,hbe4678,,,0
2132,12458313,14517,6816088,13330,1,100,N,N,N,CP_Units,TT_Task,DT_FixedDUR2,RV_OK,TK_Complete,PK000MJ75I,Eval Bids & Issue Recmd MJ750,,,,0,0,0,0,40,0,0,0,,2005-06-29 00:00,2005-06-30 00:00,2007-01-09 08:01,2007-01-09 08:01,,2007-01-27 00:00,2007-01-27 00:00,,,2005-08-02 08:00,2005-08-08 17:00,,,,,PT_Normal,,,,,523ztirAQyuj/CQHyhsy4A,,,,N,0,0,,,2007-02-01 02:42,2007-02-04 01:05,hbe4678,hbe4678,,,0
2133,12458314,14517,6816088,13330,1,100,N,N,N,CP_Units,TT_Task,DT_FixedDUR2,RV_OK,TK_Complete,PK000MJ75J,Final Negotiate/Interim Award - MJ750,,,,0,0,0,0,80,0,0,0,,2005-09-09 00:00,2005-09-12 00:00,2007-01-09 08:01,2007-01-09 08:01,,2007-01-27 00:00,2007-01-27 00:00,,,2005-08-29 08:00,2005-09-09 17:00,,,,,PT_Normal,,,,,bcKzxlhaRlS5+Afn7uteiw,,,,N,0,0,,,2007-02-01 02:42,2007-02-04 01:05,hbe4678,hbe4678,,,0
2134,12458315,14517,6816088,13330,1,100,N,N,N,CP_Units,TT_Task,DT_FixedDUR2,RV_OK,TK_Complete,PK000MJ75K,MJ750 - Fabricate/PO Promise SURFACE CONDENSORS,,,,0,0,0,0,2080,0,0,0,,2005-09-12 08:00,2006-06-02 17:00,2007-12-25 08:01,2007-12-25 08:01,,2007-01-27 00:00,2007-01-27 00:00,,,2005-09-12 08:00,2006-09-12 17:00,,,,,PT_Normal,,,,,trzMnBnCTQCTCJxx50fZJg,,,,N,0,0,,,2007-02-01 02:42,2007-02-04 01:05,hbe4678,hbe4678,,,0
2135,12458316,14517,6816088,13330,1,100,N,N,N,CP_Units,TT_Task,DT_FixedDUR2,RV_OK,TK_Complete,PK000MJ75O,MJ750 - Transport/Customes SURFACE CONDENSORS,,,,0,0,0,0,240,0,0,0,,2006-08-16 00:00,2006-09-16 00:00,2007-12-25 08:01,2007-12-25 08:01,,2007-01-27 00:00,2007-01-27 00:00,,,2006-11-06 08:00,2006-12-15 17:00,,,,,PT_Normal,,,,,kZCpHhRPQaWtS2T2++Kwjw,,,,N,0,0,,,2007-02-01 02:42,2007-02-04 01:05,hbe4678,hbe4678,,,0
2136,12458317,14517,6816088,13330,1,100,N,N,N,CP_Units,TT_Task,DT_FixedDUR2,RV_OK,TK_Complete,PK000MJ75P,Issue Formal P.O. for  MJ750,,,,0,0,0,0,80,0,0,0,,2005-09-12 00:00,2005-09-23 00:00,2007-12-25 08:01,2007-12-25 08:01,,2007-01-27 00:00,2007-01-27 00:00,,,2005-10-17 08:00,2005-10-28 17:00,,,,,PT_Normal,,,,,3bSrn8/qSoqOT4C5az4UdA,,,,N,0,0,,,2007-02-01 02:42,2007-02-04 01:05,hbe4678,hbe4678,,,0
2137,12458318,14517,6816088,13330,1,100,N,N,N,CP_Units,TT_Task,DT_FixedDUR2,RV_OK,TK_Complete,PK000ML31G,Issue ML313 RFQ,,,,0,,0,,24,,,0,,2005-03-25 08:00,2005-03-25 17:00,2008-01-29 08:01,2008-01-29 08:01,,2007-01-27 00:00,2007-01-27 00:00,,,2005-03-25 08:00,2005-03-29 17:00,,,,,PT_Normal,,,,,L6nUKXGWR8ayCdALg7kddA,,,,N,,,,,2007-02-01 02:42,2007-02-04 01:05,hbe4678,hbe4678,,,0
2138,12458319,14517,6816088,13330,1,100,N,N,N,CP_Units,TT_Task,DT_FixedDUR2,RV_OK,TK_Complete,PK000ML31I,Eval Bids & Issue Recmd ML313,,,,0,0,0,0,40,0,0,0,,2005-05-23 00:00,2005-05-27 00:00,2008-01-29 08:01,2008-01-29 08:01,,2007-01-27 00:00,2007-01-27 00:00,,,2005-06-27 08:00,2005-07-05 17:00,,,,,PT_Normal,,,,,FZH6HZJVTJmJn1TUl14o6w,,,,N,0,0,,,2007-02-01 02:42,2007-02-04 01:05,hbe4678,hbe4678,,,0
2139,12458320,14517,6816088,13330,1,100,N,N,N,CP_Units,TT_Task,DT_FixedDUR2,RV_OK,TK_Complete,PK000ML31J,Final Negotiate/Interim Award - ML313,,,,0,0,0,0,40,0,0,0,,2005-09-09 00:00,2005-09-30 17:00,2007-04-01 08:01,2007-04-01 08:01,,2007-01-27 00:00,2007-01-27 00:00,,,2005-08-29 08:00,2005-09-02 17:00,,,,,PT_Normal,,,,,hBuM5S/HTNuH/b/cbttp/Q,,,,N,0,0,,,2007-02-01 02:42,2007-02-04 01:05,hbe4678,hbe4678,,,0
2140,12458321,14517,6816088,13330,1,100,N,N,N,CP_Units,TT_Task,DT_FixedDUR2,RV_OK,TK_Complete,PK000ML31K,ML313 - Fabricate/PO Promise 160-L,,,,0,0,0,0,2560,0,0,0,,2005-09-30 00:00,2006-11-09 17:00,2008-01-29 08:01,2008-01-29 08:01,,2007-01-27 00:00,2007-01-27 00:00,,,2005-10-17 08:00,2007-01-09 17:00,,,,,PT_Normal,,,,,64gAMrXQRsufV2Gk7yzTiA,,,,N,0,0,,,2007-02-01 02:42,2007-02-04 01:05,hbe4678,hbe4678,,,0
2141,12458322,14517,6816088,13330,1,100,N,N,N,CP_Units,TT_Task,DT_FixedDUR2,RV_OK,TK_Complete,PK000ML31M,Requote/Bid Condition/Final Tab - ML313,,,,0,0,0,,160,,0,0,,2005-04-18 08:00,2005-08-29 08:00,2007-04-01 08:01,2007-04-01 08:01,,2007-01-27 00:00,2007-01-27 00:00,,,2005-04-18 08:00,2005-05-13 17:00,,,,,PT_Normal,,,,,8jJc4xPJQEKhsl0wrgvAuA,,,,N,0,0,,,2007-02-01 02:42,2007-02-04 01:05,hbe4678,hbe4678,,,0
2142,12458323,14517,6816088,13330,1,0,N,N,N,CP_Units,TT_Task,DT_FixedDUR2,RV_OK,TK_NotStart,PK000MJ36O,MJ305 - Transport/Customes OSBL PUMPS,,480,0,240,0,0,0,240,0,0,0,,,,2007-05-28 08:00,2007-07-06 17:00,,2007-03-05 08:00,2007-04-13 17:00,2007-03-05 08:00,2007-04-13 17:00,2007-03-05 08:00,2007-04-13 17:00,,2007-05-28 08:00,2007-07-06 17:00,,PT_Normal,,,,,2CrqPvz1QhKF4CDpAYGn5g,,,,N,0,0,,,2007-02-01 02:42,2007-02-01 02:43,hbe4678,hbe4678,2007-03-05 08:00,2007-04-13 17:00,240
2143,12458324,14517,6816088,13330,1,100,N,N,N,CP_Units,TT_Task,DT_FixedDUR2,RV_OK,TK_Complete,PK000MJ36P,Issue Formal P.O. for  MJ306,,,,0,0,0,0,80,0,0,0,,2005-09-22 00:00,2006-03-07 00:00,2007-04-23 08:00,2007-04-23 08:00,,2007-01-27 00:00,2007-01-27 00:00,,,2005-10-17 08:00,2005-10-28 17:00,,,,,PT_Normal,,,,,6OoCEzFxR26t7Ty53g0fow,,,,N,0,0,,,2007-02-01 02:42,2007-02-04 01:05,hbe4678,hbe4678,,,0
2144,12458325,14517,6816088,13330,1,100,N,N,N,CP_Units,TT_Task,DT_FixedDUR2,RV_OK,TK_Complete,PK000MJ37G,Issue MJ340 RFQ,,,,0,0,0,0,40,0,0,0,,2005-06-30 08:00,2005-07-12 00:00,2007-02-07 08:01,2007-02-07 08:01,,2007-01-27 00:00,2007-01-27 00:00,,,2005-06-30 08:00,2005-07-08 17:00,,,,,PT_Normal,,,,,TQEsSroHTqCMO/zZtz1fqA,,,,N,0,0,,,2007-02-01 02:42,2007-02-04 01:05,hbe4678,hbe4678,,,0
2145,12458326,14517,6816088,13330,1,100,N,N,N,CP_Units,TT_Task,DT_FixedDUR2,RV_OK,TK_Complete,PK000MJ37H,Receive Quotes MJ340,,,,0,0,0,0,160,0,0,0,,2005-07-13 00:00,2005-08-18 00:00,2007-02-07 08:01,2007-02-07 08:01,,2007-01-27 00:00,2007-01-27 00:00,,,2005-07-11 08:00,2005-08-05 17:00,,,,,PT_Normal,,,,,6rFR6FaNSwi4bQSkHxG4CA,,,,N,0,0,,,2007-02-01 02:42,2007-02-04 01:05,hbe4678,hbe4678,,,0
2146,12458327,14517,6816088,13330,1,100,N,N,N,CP_Units,TT_Task,DT_FixedDUR2,RV_OK,TK_Complete,PK000MJ37I,Eval Bids & Issue Recmd MJ340,,,,0,0,0,0,96,0,0,0,,2005-09-28 00:00,2005-11-18 17:00,2007-02-07 08:01,2007-02-07 08:01,,2007-01-27 00:00,2007-01-27 00:00,,,2005-09-26 08:00,2005-10-11 17:00,,,,,PT_Normal,,,,,bDJSK2o1QBmsTHKLSbkW9w,,,,N,0,0,,,2007-02-01 02:42,2007-02-04 01:05,hbe4678,hbe4678,,,0
2147,12458328,14517,6816088,13330,1,100,N,N,N,CP_Units,TT_Task,DT_FixedDUR2,RV_OK,TK_Complete,PK000ML51O,ML512 - Transport/Customs 2102-L LOADING ARM,,,,0,0,0,0,240,0,0,0,,2006-09-08 00:00,2006-11-01 00:00,2007-12-04 08:01,2007-12-04 08:01,,2007-01-27 00:00,2007-01-27 00:00,,,2006-10-31 08:00,2006-12-11 17:00,,,,,PT_Normal,,,,,G7YdXSs1TL6NsrycHKmTPg,,,,N,0,0,,,2007-02-01 02:42,2007-02-04 01:05,hbe4678,hbe4678,,,0
2148,12458329,14517,6816088,13330,1,100,N,N,N,CP_Units,TT_Task,DT_FixedDUR2,RV_OK,TK_Complete,PK000ML51P,Issue Formal P.O. for  ML512,,,,0,0,0,0,80,0,0,0,,2005-10-12 00:00,2005-10-28 00:00,2007-12-04 08:01,2007-12-04 08:01,,2007-01-27 00:00,2007-01-27 00:00,,,2005-10-17 08:00,2005-10-28 17:00,,,,,PT_Normal,,,,,4TxeJOsRSLSAXAwR07vwnA,,,,N,0,0,,,2007-02-01 02:42,2007-02-04 01:05,hbe4678,hbe4678,,,0
2149,12458330,14517,6816088,13330,1,100,N,N,N,CP_Units,TT_Task,DT_FixedDUR2,RV_OK,TK_Complete,PK000ML43H,Receive Quotes ML430,,,,0,0,0,0,120,0,0,0,,2005-07-22 00:00,2005-08-10 00:00,2007-03-07 08:01,2007-03-07 08:01,,2007-01-27 00:00,2007-01-27 00:00,,,2005-07-25 08:00,2005-08-12 17:00,,,,,PT_Normal,,,,,IXoJXj4qTi+lpy47Btcz9g,,,,N,0,0,,,2007-02-01 02:42,2007-02-04 01:05,hbe4678,hbe4678,,,0
2150,12458331,14517,6816088,13330,1,100,N,N,N,CP_Units,TT_Task,DT_FixedDUR2,RV_OK,TK_Complete,PK000ML43I,Eval Bids & Issue Recmd ML430,,,,0,0,0,0,120,0,0,0,,2005-09-23 00:00,2005-10-13 00:00,2007-03-07 08:01,2007-03-07 08:01,,2007-01-27 00:00,2007-01-27 00:00,,,2005-09-26 08:00,2005-10-14 17:00,,,,,PT_Normal,,,,,UHahupOCRB6xQUe8f3sM5A,,,,N,0,0,,,2007-02-01 02:42,2007-02-04 01:05,hbe4678,hbe4678,,,0
2151,12458332,14517,6816088,13330,1,100,N,N,N,CP_Units,TT_Task,DT_FixedDUR2,RV_OK,TK_Complete,PK000ML43J,Final Negotiate/Interim Award - ML430,,,,0,0,0,0,24,0,0,0,,2005-10-13 00:00,2005-11-14 00:00,2007-03-07 08:01,2007-03-07 08:01,,2007-01-27 00:00,2007-01-27 00:00,,,2005-10-17 08:00,2005-10-19 17:00,,,,,PT_Normal,,,,,hnPaURusR0O/tLWqcF87Ow,,,,N,0,0,,,2007-02-01 02:42,2007-02-04 01:05,hbe4678,hbe4678,,,0
2152,12458333,14517,6816088,13330,1,100,N,N,N,CP_Units,TT_Task,DT_FixedDUR2,RV_OK,TK_Complete,PK000ML43K,ML430 - Fabricate/PO Promise 110-L BENFIELD MIXER,,,,0,0,0,0,640,0,0,0,,2005-11-14 00:00,2006-04-11 00:00,2007-11-03 08:01,2007-11-03 08:01,,2007-01-27 00:00,2007-01-27 00:00,,,2005-10-31 08:00,2006-02-21 17:00,,,,,PT_Normal,,,,,k1+Bx5WcShul+alqj3zD9A,,,,N,0,0,,,2007-02-01 02:42,2007-02-04 01:05,hbe4678,hbe4678,,,0
2153,12458334,14517,6816088,13330,1,100,N,N,N,CP_Units,TT_Task,DT_FixedDUR2,RV_OK,TK_Complete,PK000ML43O,ML430 - Transport/Customes 110-L BENFIELD MIXER,,,,0,0,0,0,240,0,0,0,,2006-08-16 00:00,2006-09-14 00:00,2007-11-03 08:01,2007-11-03 08:01,,2007-01-27 00:00,2007-01-27 00:00,,,2006-09-04 08:00,2006-10-13 17:00,,,,,PT_Normal,,,,,MOWNt02FTqaXfqnbYJSoZg,,,,N,0,0,,,2007-02-01 02:42,2007-02-04 01:05,hbe4678,hbe4678,,,0
2154,12458335,14517,6816088,13330,1,100,N,N,N,CP_Units,TT_Task,DT_FixedDUR2,RV_OK,TK_Complete,PK000ML43P,Issue Formal P.O. for  ML430,,,,0,0,0,0,80,0,0,0,,2005-11-14 00:00,2005-12-06 17:00,2007-11-03 08:01,2007-11-03 08:01,,2007-01-27 00:00,2007-01-27 00:00,,,2005-12-19 08:00,2006-01-03 17:00,,,,,PT_Normal,,,,,Sl6yE7+zSJWrtpxqJtivDg,,,,N,0,0,,,2007-02-01 02:42,2007-02-04 01:05,hbe4678,hbe4678,,,0
2155,12458336,14517,6816088,3079,1,0,N,N,N,CP_Units,TT_Task,DT_FixedDUR2,RV_OK,TK_NotStart,PK000ML31O,ML313 - Transport/Customs 160-L,,2920.01666666667,0.0166666666666667,200,0,0,0,200,0,0,0,,,,2008-01-30 08:01,2008-02-24 08:01,,2007-01-30 08:00,2007-02-23 17:00,2007-01-30 08:00,2007-02-23 17:00,2007-01-30 08:00,2007-02-23 17:00,,2008-01-30 08:01,2008-02-24 08:01,,PT_Normal,,,,,x1xbtrbhTIqokvgY1ApZKQ,,,,N,0,0,,,2007-02-01 02:42,2007-02-04 01:00,hbe4678,hbe4678,2007-01-30 08:00,2007-02-23 17:00,200
2156,12458337,14517,6816088,13330,1,100,N,N,N,CP_Units,TT_Task,DT_FixedDUR2,RV_OK,TK_Complete,PK000ML31P,Issue Formal P.O. for  ML313,,,,0,0,0,0,80,0,0,0,,2005-09-30 00:00,2005-10-25 00:00,2008-01-29 08:01,2008-01-29 08:01,,2007-01-27 00:00,2007-01-27 00:00,,,2005-10-28 08:01,2005-11-11 08:01,,,,,PT_Normal,,,,,jUzAWb4UQamSntfDwupXqw,,,,N,0,0,,,2007-02-01 02:42,2007-02-04 01:05,hbe4678,hbe4678,,,0
2157,12458338,14517,6816088,13330,1,100,N,N,N,CP_Units,TT_Task,DT_FixedDUR2,RV_OK,TK_Complete,PK000ML33G,Issue ML330 RFQ,,,,0,0,0,0,24,0,0,0,,2005-06-14 00:00,2005-06-15 00:00,2007-01-09 08:01,2007-01-09 08:01,,2007-01-27 00:00,2007-01-27 00:00,,,2005-06-20 08:00,2005-06-22 17:00,,,,,PT_Normal,,,,,+8eRq0SGQaSn5C7C4Yf8Sw,,,,N,0,0,,,2007-02-01 02:42,2007-02-04 01:05,hbe4678,hbe4678,,,0
2158,12458339,14517,6816088,13330,1,100,N,N,N,CP_Units,TT_Task,DT_FixedDUR2,RV_OK,TK_Complete,PK000ML33H,Receive Quotes ML330,,,,0,0,0,0,120,0,0,0,,2005-06-16 00:00,2005-08-10 00:00,2007-01-09 08:01,2007-01-09 08:01,,2007-01-27 00:00,2007-01-27 00:00,,,2005-06-23 08:00,2005-07-15 17:00,,,,,PT_Normal,,,,,yl1aJU+mTBmHSBDG6+jxFQ,,,,N,0,0,,,2007-02-01 02:42,2007-02-04 01:05,hbe4678,hbe4678,,,0
2159,12458340,14517,6816088,13330,1,100,N,N,N,CP_Units,TT_Task,DT_FixedDUR2,RV_OK,TK_Complete,PK000ML33I,Eval Bids & Issue Recmd ML330,,,,0,0,0,0,120,0,0,0,,2005-09-19 00:00,2005-10-14 00:00,2007-01-09 08:01,2007-01-09 08:01,,2007-01-27 00:00,2007-01-27 00:00,,,2005-08-29 08:00,2005-09-16 17:00,,,,,PT_Normal,,,,,dpA/DtEDRwm2Shbkqk0VGA,,,,N,0,0,,,2007-02-01 02:42,2007-02-04 01:05,hbe4678,hbe4678,,,0
2160,12458341,14517,6816088,13330,1,100,N,N,N,CP_Units,TT_Task,DT_FixedDUR2,RV_OK,TK_Complete,PK000ML33J,Final Negotiate/Interim Award - ML330,,,,0,0,0,0,24,0,0,0,,2005-10-14 00:00,2005-10-21 00:00,2007-01-09 08:01,2007-01-09 08:01,,2007-01-27 00:00,2007-01-27 00:00,,,2005-10-17 08:00,2005-10-19 17:00,,,,,PT_Normal,,,,,Gfr3hvf3TumBWKHTr/5j7Q,,,,N,0,0,,,2007-02-01 02:42,2007-02-04 01:05,hbe4678,hbe4678,,,0
2161,12458342,14517,6816088,13330,1,100,N,N,N,CP_Units,TT_Task,DT_FixedDUR2,RV_OK,TK_Complete,PK000ML33K,ML330 - Fabricate/Po Promise 2101-L,,,,0,0,0,0,1360,0,0,0,,2005-10-21 00:00,2006-09-11 00:00,2008-01-26 08:01,2008-01-26 08:01,,2007-01-27 00:00,2007-01-27 00:00,,,2005-10-20 08:00,2006-06-16 17:00,,,,,PT_Normal,,,,,p9QLysB3RMmd8jxpkW80+g,,,,N,0,0,,,2007-02-01 02:42,2007-02-04 01:05,hbe4678,hbe4678,,,0
2162,12458343,14517,6816088,13330,1,100,N,N,N,CP_Units,TT_Task,DT_FixedDUR2,RV_OK,TK_Complete,PK000ML33O,ML330 - Transport/Customes 2101-L,,,,0,0,0,0,240,0,0,0,,2006-11-13 08:00,2006-12-09 00:00,2008-01-26 08:01,2008-01-26 08:01,,2007-01-27 00:00,2007-01-27 00:00,,,2006-11-13 08:00,2006-12-22 17:00,,,,,PT_Normal,,,,,HrWXUcGpS6WZE3xCQDh5hg,,,,N,0,0,,,2007-02-01 02:42,2007-02-04 01:05,hbe4678,hbe4678,,,0
2163,12458344,14517,6816088,13330,1,100,N,N,N,CP_Units,TT_Task,DT_FixedDUR2,RV_OK,TK_Complete,PK000ML33P,Issue Formal P.O. for  ML330,,,,0,0,0,0,24,0,0,0,,2005-10-21 00:00,2005-11-30 17:00,2008-01-26 08:01,2008-01-26 08:01,,2007-01-27 00:00,2007-01-27 00:00,,,2005-10-20 08:00,2005-10-24 17:00,,,,,PT_Normal,,,,,Akx8Hkd3S5i3I0APsxFlRA,,,,N,0,0,,,2007-02-01 02:42,2007-02-04 01:05,hbe4678,hbe4678,,,0
2164,12458345,14517,6816088,13330,1,100,N,N,N,CP_Units,TT_Task,DT_FixedDUR2,RV_OK,TK_Complete,PK000ML42G,Issue ML420 RFQ,,,,0,,0,,24,,,0,,2005-04-11 08:00,2005-04-14 17:00,2007-11-03 08:01,2007-11-03 08:01,,2007-01-27 00:00,2007-01-27 00:00,,,2005-04-11 08:00,2005-04-13 17:00,,,,,PT_Normal,,,,,EEXNOsuORGupmVdr+w1W9w,,,,N,,,,,2007-02-01 02:42,2007-02-04 01:05,hbe4678,hbe4678,,,0
2165,12458346,14517,6816088,13330,1,100,N,N,N,CP_Units,TT_Task,DT_FixedDUR2,RV_OK,TK_Complete,PK000ML42H,Receive Quotes ML420,,,,0,0,0,,120,,0,0,,2005-04-15 08:00,2005-05-09 00:00,2007-11-03 08:01,2007-11-03 08:01,,2007-01-27 00:00,2007-01-27 00:00,,,2005-04-15 08:00,2005-05-05 17:00,,,,,PT_Normal,,,,,ScNDqV8nQAaqiAfDm/wPvg,,,,N,0,0,,,2007-02-01 02:42,2007-02-04 01:05,hbe4678,hbe4678,,,0
2166,12458347,14517,6816088,13330,1,100,N,N,N,CP_Units,TT_Task,DT_FixedDUR2,RV_OK,TK_Complete,PK000ML42I,Eval Bids & Issue Recmd ML420,,,,0,0,0,0,40,0,0,0,,2005-05-23 00:00,2005-05-27 00:00,2007-11-03 08:01,2007-11-03 08:01,,2007-01-27 00:00,2007-01-27 00:00,,,2005-06-07 08:00,2005-06-13 17:00,,,,,PT_Normal,,,,,I0GiOgJVTayosxvGjKX73g,,,,N,0,0,,,2007-02-01 02:42,2007-02-04 01:05,hbe4678,hbe4678,,,0
2167,12458348,14517,6816088,13330,1,100,N,N,N,CP_Units,TT_Task,DT_FixedDUR2,RV_OK,TK_Complete,PK000ML42J,Final Negotiate/Interim Award - ML420,,,,0,0,0,0,40,0,0,0,,2005-11-08 08:00,2005-11-11 17:00,2007-01-09 08:01,2007-01-09 08:01,,2007-01-27 00:00,2007-01-27 00:00,,,2005-11-08 08:00,2005-11-14 17:00,,,,,PT_Normal,,,,,+YTl31e4TrKTGCFqMtikAw,,,,N,0,0,,,2007-02-01 02:42,2007-02-04 01:05,hbe4678,hbe4678,,,0
2168,12458349,14517,6816088,13330,1,100,N,N,N,CP_Units,TT_Task,DT_FixedDUR2,RV_OK,TK_Complete,PK000ML42M,Requote/Bid Condition/Final Tab - ML420,,,,0,0,0,0,160,0,0,0,,2005-05-26 00:00,2005-11-17 17:00,2007-01-09 08:01,2007-01-09 08:01,,2007-01-27 00:00,2007-01-27 00:00,,,2005-06-24 08:00,2005-07-25 17:00,,,,,PT_Normal,,,,,YKg/QFRYQFqOxB1+CrGwrw,,,,N,0,0,,,2007-02-01 02:42,2007-02-04 01:05,hbe4678,hbe4678,,,0
2169,12458350,14517,6816088,13330,1,100,N,N,N,CP_Units,TT_Task,DT_FixedDUR2,RV_OK,TK_Complete,PK000ML42O,ML420 - Transpor/Customes CARTRIDGE FILTERS,,,,0,0,0,0,240,0,0,0,,2006-08-16 00:00,2006-09-14 00:00,2007-11-03 08:01,2007-11-03 08:01,,2007-01-27 00:00,2007-01-27 00:00,,,2006-09-04 08:00,2006-10-13 17:00,,,,,PT_Normal,,,,,TbANxQ52T0+mU4OyprBViw,,,,N,0,0,,,2007-02-01 02:42,2007-02-04 01:05,hbe4678,hbe4678,,,0
2170,12458351,14517,6816088,13330,1,100,N,N,N,CP_Units,TT_Task,DT_FixedDUR2,RV_OK,TK_Complete,PK000MU21H,Receive Quotes MU221,,,,0,0,0,0,120,0,0,0,,2005-08-08 00:00,2005-08-25 00:00,2007-01-10 08:00,2007-01-10 08:00,,2007-01-27 00:00,2007-01-27 00:00,,,2005-09-23 08:00,2005-10-13 17:00,,,,,PT_Normal,,,,,jgMtfxUAS1C8a/mufKO8fg,,,,N,0,0,,,2007-02-01 02:42,2007-02-04 01:05,hbe4678,hbe4678,,,0
2171,12458352,14517,6816088,13330,1,100,N,N,N,CP_Units,TT_Task,DT_FixedDUR2,RV_OK,TK_Complete,PK000MU21I,Eval Bids & Issue Recmd MU221,,,,0,0,0,0,120,0,0,0,,2005-10-17 08:00,2005-10-20 00:00,2007-01-10 08:00,2007-01-10 08:00,,2007-01-27 00:00,2007-01-27 00:00,,,2005-10-17 08:00,2005-11-04 17:00,,,,,PT_Normal,,,,,OSDlDUzGSA65aGNin8I8Fw,,,,N,0,0,,,2007-02-01 02:42,2007-02-04 01:05,hbe4678,hbe4678,,,0
2172,12458353,14517,6816088,13330,1,100,N,N,N,CP_Units,TT_Task,DT_FixedDUR2,RV_OK,TK_Complete,PK000MU21J,Final Negotiate/Interim Award - MU221,,,,0,0,0,0,24,0,0,0,,2005-10-20 00:00,2005-12-05 00:00,2007-01-10 08:00,2007-01-10 08:00,,2007-01-27 00:00,2007-01-27 00:00,,,2005-11-11 08:00,2005-11-15 17:00,,,,,PT_Normal,,,,,0As+46FDQx6iTeBJwj1/1w,,,,N,0,0,,,2007-02-01 02:42,2007-02-04 01:05,hbe4678,hbe4678,,,0
2173,12458354,14517,6816088,13330,1,100,N,N,N,CP_Units,TT_Task,DT_FixedDUR2,RV_OK,TK_Complete,PK000MU21K,MU221 - Fabricate/PO Promise LIFT STATION,,,,0,0,0,0,800,0,0,0,,2005-12-05 00:00,2006-10-02 17:00,2007-07-08 17:00,2007-07-08 17:00,,2007-01-27 00:00,2007-01-27 00:00,,,2005-11-14 08:00,2006-04-04 17:00,,,,,PT_Normal,,,,,l0vozxEERmOMLg7JlUuefA,,,,N,0,0,,,2007-02-01 02:42,2007-02-04 01:05,hbe4678,hbe4678,,,0
2174,12458355,14517,6816088,13330,1,100,N,N,N,CP_Units,TT_Task,DT_FixedDUR2,RV_OK,TK_Complete,PK000MU21O,MU221 - Transport/Customs LIFT STATION,,,,0,0,0,0,240,0,0,0,,2006-11-13 08:00,2006-12-12 00:00,2007-07-08 17:00,2007-07-08 17:00,,2007-01-27 00:00,2007-01-27 00:00,,,2006-11-13 08:00,2006-12-22 17:00,,,,,PT_Normal,,,,,V10zImATQfy9X/aAURk6TA,,,,N,0,0,,,2007-02-01 02:42,2007-02-04 01:05,hbe4678,hbe4678,,,0
2175,12458356,14517,6816088,13330,1,100,N,N,N,CP_Units,TT_Task,DT_FixedDUR2,RV_OK,TK_Complete,PK000MU21P,Issue Formal P.O. for  MU221,,,,0,0,0,0,24,0,0,0,,2005-12-05 00:00,2006-01-11 00:00,2007-07-08 17:00,2007-07-08 17:00,,2007-01-27 00:00,2007-01-27 00:00,,,2005-11-18 08:01,2005-11-23 08:01,,,,,PT_Normal,,,,,zmffxafCScKSElkfHbeENA,,,,N,0,0,,,2007-02-01 02:42,2007-02-04 01:05,hbe4678,hbe4678,,,0
2176,12458357,14517,6816088,13330,1,100,N,N,N,CP_Units,TT_Task,DT_FixedDUR2,RV_OK,TK_Complete,PK000MU22G,Issue MU222 RFQ,,,,0,0,0,0,0,0,0,0,,2005-08-02 00:00,2005-08-02 00:00,2007-03-07 08:01,2007-03-07 08:01,,2007-01-27 00:00,2007-01-27 00:00,,,2005-08-29 08:00,2005-08-29 08:00,,,,,PT_Normal,,,,,sDV86jblSlqS7jELB88AHw,,,,N,0,0,,,2007-02-01 02:42,2007-02-04 01:05,hbe4678,hbe4678,,,0
2177,12458358,14517,6816088,13330,1,100,N,N,N,CP_Units,TT_Task,DT_FixedDUR2,RV_OK,TK_Complete,PK000MU22H,Receive Quotes MU222,,,,0,0,0,0,120,0,0,0,,2005-08-03 00:00,2005-08-22 00:00,2007-03-07 08:01,2007-03-07 08:01,,2007-01-27 00:00,2007-01-27 00:00,,,2005-08-29 08:00,2005-09-16 17:00,,,,,PT_Normal,,,,,JBCZUqyDR1+YTe5qCdh7sA,,,,N,0,0,,,2007-02-01 02:42,2007-02-04 01:05,hbe4678,hbe4678,,,0
2178,12458359,14517,6816088,13330,1,100,N,N,N,CP_Units,TT_Task,DT_FixedDUR2,RV_OK,TK_Complete,PK000MU22I,Eval Bids & Issue Recmd MU222,,,,0,0,0,0,120,0,0,0,,2005-10-07 00:00,2005-10-20 00:00,2007-03-07 08:01,2007-03-07 08:01,,2007-01-27 00:00,2007-01-27 00:00,,,2005-10-17 08:00,2005-11-04 17:00,,,,,PT_Normal,,,,,npGxOaAlSTu/J5Z0t2mZqg,,,,N,0,0,,,2007-02-01 02:42,2007-02-04 01:05,hbe4678,hbe4678,,,0
2179,12458360,14517,6816088,13330,1,100,N,N,N,CP_Units,TT_Task,DT_FixedDUR2,RV_OK,TK_Complete,PK000MU22J,Final Negotiate/Interim Award - MU222,,,,0,0,0,0,24,0,0,0,,2005-10-20 00:00,2005-12-05 00:00,2007-03-07 08:01,2007-03-07 08:01,,2007-01-27 00:00,2007-01-27 00:00,,,2005-11-01 08:00,2005-11-03 17:00,,,,,PT_Normal,,,,,Xvo6OHQEQCC8xu07E/oQxQ,,,,N,0,0,,,2007-02-01 02:42,2007-02-04 01:05,hbe4678,hbe4678,,,0
2180,12458361,14517,6816088,13330,1,100,N,N,N,CP_Units,TT_Task,DT_FixedDUR2,RV_OK,TK_Complete,PK000ML50G,Issue ML500 RFQ,,,,0,,0,,24,,,0,,2005-03-29 08:00,2005-03-31 17:00,2007-02-07 08:01,2007-02-07 08:01,,2007-01-27 00:00,2007-01-27 00:00,,,2005-03-29 08:00,2005-03-31 17:00,,,,,PT_Normal,,,,,/v8j/vqbQjG35JYpR70Xng,,,,N,,,,,2007-02-01 02:42,2007-02-04 01:05,hbe4678,hbe4678,,,0
2181,12458362,14517,6816088,13330,1,100,N,N,N,CP_Units,TT_Task,DT_FixedDUR2,RV_OK,TK_Complete,PK000ML50H,Receive Quotes ML500,,,,0,0,0,,120,,0,0,,2005-04-01 08:00,2005-04-22 00:00,2007-02-07 08:01,2007-02-07 08:01,,2007-01-27 00:00,2007-01-27 00:00,,,2005-04-01 08:00,2005-04-21 17:00,,,,,PT_Normal,,,,,neMVy98JSP+87V+XxFQ01w,,,,N,0,0,,,2007-02-01 02:42,2007-02-04 01:05,hbe4678,hbe4678,,,0
2182,12458363,14517,6816088,13330,1,100,N,N,N,CP_Units,TT_Task,DT_FixedDUR2,RV_OK,TK_Complete,PK000ML50I,Eval Bids & Issue Recmd ML500,,,,0,0,0,0,40,0,0,0,,2005-05-27 08:00,2005-06-03 17:00,2007-03-05 08:00,2007-03-05 08:00,,2007-01-27 00:00,2007-01-27 00:00,,,2005-05-27 08:00,2005-06-03 17:00,,,,,PT_Normal,,,,,isp+vcMmTMyUrknuCETzhA,,,,N,0,0,,,2007-02-01 02:42,2007-02-04 01:05,hbe4678,hbe4678,,,0
2183,12458364,14517,6816088,13330,1,100,N,N,N,CP_Units,TT_Task,DT_FixedDUR2,RV_OK,TK_Complete,PK000ML50J,Final Negotiate/Interim Award - ML500,,,,0,0,0,0,80,0,0,0,,2006-02-16 00:00,2006-03-03 17:00,2007-03-05 08:00,2007-03-05 08:00,,2007-01-27 00:00,2007-01-27 00:00,,,2006-02-27 08:00,2006-03-10 17:00,,,,,PT_Normal,,,,,KNexzHzESdCdV6Lmp2Kllw,,,,N,0,0,,,2007-02-01 02:42,2007-02-04 01:05,hbe4678,hbe4678,,,0
2184,12458365,14517,6816088,13330,1,0,N,N,N,CP_Units,TT_Task,DT_FixedDUR2,RV_OK,TK_Active,PK000ML50K,ML500 - Fabricate/PO Promise 2003-L PAI/IA,,624,0,248,0,0,0,1120,0,0,0,,2006-03-06 08:00,,2007-05-17 08:00,2007-06-28 17:00,2007-03-12 17:00,2007-01-29 08:00,2007-03-12 17:00,2007-01-29 08:00,2007-03-12 17:00,2006-03-06 08:00,2006-09-15 17:00,,2007-05-17 08:00,2007-06-28 17:00,,PT_Normal,,,,,7/XFJLVKRmOSFTkNVYy+OQ,,,,N,0,0,,,2007-02-01 02:42,2007-02-01 02:43,hbe4678,hbe4678,2007-01-29 08:00,2007-03-12 17:00,248
2185,12458366,14517,6816088,13330,1,100,N,N,N,CP_Units,TT_Task,DT_FixedDUR2,RV_OK,TK_Complete,PK000ML50M,Requote/Bid Condition/Final Tab - ML500,,,,0,0,0,0,160,0,0,0,,2005-05-30 00:00,2005-09-07 17:00,2007-02-07 08:01,2007-02-07 08:01,,2007-01-27 00:00,2007-01-27 00:00,,,2005-05-27 08:00,2005-06-24 17:00,,,,,PT_Normal,,,,,T4JqD8xAQYWkcJzouvD/2g,,,,N,0,0,,,2007-02-01 02:42,2007-02-04 01:05,hbe4678,hbe4678,,,0
2186,12458367,14517,6816088,4050,1,0,N,N,N,CP_Units,TT_Task,DT_FixedDUR2,RV_OK,TK_NotStart,PK000ML50O,ML500 - Transport/Customes 2003-L PAI/IA,,880,0.0166666666666667,168,0,0,0,240,0,0,0,,,,2007-07-26 08:00,2007-08-15 17:00,,2007-04-07 08:00,2007-04-27 17:00,2007-04-07 08:00,2007-04-27 17:00,2007-04-07 08:00,2007-05-06 17:00,,2007-07-26 08:00,2007-08-15 17:00,,PT_Normal,,,,,yIx3ld9uQCe5pLHubJ4Hxw,,,,N,0,0,,,2007-02-01 02:42,2007-02-04 01:00,hbe4678,hbe4678,2007-04-07 08:00,2007-04-27 17:00,168
2187,12458368,14517,6816088,13330,1,100,N,N,N,CP_Units,TT_Task,DT_FixedDUR2,RV_OK,TK_Complete,PK000ML50P,Issue Formal P.O. for  ML500,,,,0,0,0,0,24,0,0,0,,2006-03-01 00:00,2006-04-25 17:00,2007-05-17 08:00,2007-05-17 08:00,,2007-01-27 00:00,2007-01-27 00:00,,,2006-04-20 16:59,2006-04-25 16:59,,,,,PT_Normal,,,,,HxbWFqniQCi27U4H7vDgoA,,,,N,0,0,,,2007-02-01 02:42,2007-02-04 01:05,hbe4678,hbe4678,,,0
2188,12458369,14517,6816088,13330,1,100,N,N,N,CP_Units,TT_Task,DT_FixedDUR2,RV_OK,TK_Complete,PK000ML51G,Issue ML512 RFQ,,,,0,0,0,0,24,0,0,0,,2005-06-01 00:00,2005-06-01 00:00,2007-02-07 08:01,2007-02-07 08:01,,2007-01-27 00:00,2007-01-27 00:00,,,2005-06-03 08:00,2005-06-07 17:00,,,,,PT_Normal,,,,,WXWdsiUzTWuAU5xEVt9z3g,,,,N,0,0,,,2007-02-01 02:42,2007-02-04 01:05,hbe4678,hbe4678,,,0
2189,12458370,14517,6816088,13330,1,100,N,N,N,CP_Units,TT_Task,DT_FixedDUR2,RV_OK,TK_Complete,PK000ML51H,Receive Quotes ML512,,,,0,0,0,0,120,0,0,0,,2005-06-02 00:00,2005-07-18 00:00,2007-02-07 08:01,2007-02-07 08:01,,2007-01-27 00:00,2007-01-27 00:00,,,2005-06-08 08:00,2005-06-28 17:00,,,,,PT_Normal,,,,,vBKbLQBTRqel+VH0PMDlZg,,,,N,0,0,,,2007-02-01 02:42,2007-02-04 01:05,hbe4678,hbe4678,,,0
2190,12458371,14517,6816088,13330,1,100,N,N,N,CP_Units,TT_Task,DT_FixedDUR2,RV_OK,TK_Complete,PK000MU21G,Issue MU221 RFQ,,,,0,0,0,0,24,0,0,0,,2005-08-03 00:00,2005-08-05 00:00,2007-01-10 08:00,2007-01-10 08:00,,2007-01-27 00:00,2007-01-27 00:00,,,2005-09-20 08:00,2005-09-22 17:00,,,,,PT_Normal,,,,,QSuZ/dqKRCi2IJTA2G5ybw,,,,N,0,0,,,2007-02-01 02:42,2007-02-04 01:05,hbe4678,hbe4678,,,0
2191,12458372,14517,6816088,13330,1,100,N,N,N,CP_Units,TT_Task,DT_FixedDUR2,RV_OK,TK_Complete,PK000ML51I,Eval Bids & Issue Recmd ML512,,,,0,0,0,0,40,0,0,0,,2005-09-19 00:00,2005-10-07 00:00,2007-02-07 08:01,2007-02-07 08:01,,2007-01-27 00:00,2007-01-27 00:00,,,2005-07-26 08:00,2005-08-01 17:00,,,,,PT_Normal,,,,,Zhci4ac9R/eJrqVqdZ07rw,,,,N,0,0,,,2007-02-01 02:42,2007-02-04 01:05,hbe4678,hbe4678,,,0
2192,12458373,14517,6816088,13330,1,100,N,N,N,CP_Units,TT_Task,DT_FixedDUR2,RV_OK,TK_Complete,PK000ML51J,Final Negotiate/Interim Award - ML512,,,,0,0,0,0,24,0,0,0,,2005-10-10 00:00,2005-10-12 00:00,2007-02-07 08:01,2007-02-07 08:01,,2007-01-27 00:00,2007-01-27 00:00,,,2005-09-26 08:00,2005-09-28 17:00,,,,,PT_Normal,,,,,j/Q+eH9pTu2IFiKB3eCeMw,,,,N,0,0,,,2007-02-01 02:42,2007-02-04 01:05,hbe4678,hbe4678,,,0
2193,12458374,14517,6816088,13330,1,100,N,N,N,CP_Units,TT_Task,DT_FixedDUR2,RV_OK,TK_Complete,PK000ML51K,ML512 - Fabricate/PO Promise 2102-L LOADING ARM,,,,0,0,0,0,1520,0,0,0,,2005-10-12 00:00,2006-06-28 00:00,2007-12-04 08:01,2007-12-04 08:01,,2007-01-27 00:00,2007-01-27 00:00,,,2005-10-17 08:00,2006-07-11 17:00,,,,,PT_Normal,,,,,fNcSSZsbQc+EElTpBY6S4Q,,,,N,0,0,,,2007-02-01 02:42,2007-02-04 01:05,hbe4678,hbe4678,,,0
2194,12458375,14517,6816088,13330,1,100,N,N,N,CP_Units,TT_Task,DT_FixedDUR2,RV_OK,TK_Complete,PK000MU22O,MU222 - Transport/Customes .2401-U,,,,0,0,0,0,240,0,0,0,,2006-11-13 08:00,2006-12-08 00:00,2007-12-31 08:01,2007-12-31 08:01,,2007-01-27 00:00,2007-01-27 00:00,,,2006-11-13 08:00,2006-12-22 17:00,,,,,PT_Normal,,,,,lTpg76yLSKWch4VucuKdEg,,,,N,0,0,,,2007-02-01 02:42,2007-02-04 01:05,hbe4678,hbe4678,,,0
2195,12458376,14517,6816088,13330,1,100,N,N,N,CP_Units,TT_Task,DT_FixedDUR2,RV_OK,TK_Complete,PK000MU22P,Issue Formal P.O. for  MU222,,,,0,0,0,0,24,0,0,0,,2005-12-05 00:00,2006-01-11 00:00,2007-12-31 08:01,2007-12-31 08:01,,2007-01-27 00:00,2007-01-27 00:00,,,2005-11-18 08:01,2005-11-23 08:01,,,,,PT_Normal,,,,,n3qsn2s1SoK8AWs31/R7Fw,,,,N,0,0,,,2007-02-01 02:42,2007-02-04 01:05,hbe4678,hbe4678,,,0
2196,12458377,14517,6816088,13330,1,100,N,N,N,CP_Units,TT_Task,DT_FixedDUR2,RV_OK,TK_Complete,PK000MU29G,Issue MU292 RFQ,,,,0,0,0,0,24,0,0,0,,2005-12-27 00:00,2006-01-05 17:00,2007-05-07 08:00,2007-05-07 08:00,,2007-01-27 00:00,2007-01-27 00:00,,,2006-01-03 08:00,2006-01-05 17:00,,,,,PT_Normal,,,,,y6x2EIo+TZGnI/7V9oaznA,,,,N,0,0,,,2007-02-01 02:42,2007-02-04 01:05,hbe4678,hbe4678,,,0
2197,12458378,14517,6816088,13330,1,100,N,N,N,CP_Units,TT_Task,DT_FixedDUR2,RV_OK,TK_Complete,PK000MU29H,Receive Quotes MU292,,,,0,0,0,0,120,0,0,0,,2006-01-05 00:00,2006-02-20 00:00,2007-05-07 08:00,2007-05-07 08:00,,2007-01-27 00:00,2007-01-27 00:00,,,2006-01-03 08:00,2006-01-23 17:00,,,,,PT_Normal,,,,,H5B33RAFTla/xoSJIYDjTg,,,,N,0,0,,,2007-02-01 02:42,2007-02-04 01:05,hbe4678,hbe4678,,,0
2198,12458379,14517,6816088,13330,1,100,N,N,N,CP_Units,TT_Task,DT_FixedDUR2,RV_OK,TK_Complete,PK000MU29I,Eval Bids & Issue Recmd MU292,,,,0,0,0,0,40,0,0,0,,2006-04-03 00:00,2006-04-19 00:00,2007-05-07 08:00,2007-05-07 08:00,,2007-01-27 00:00,2007-01-27 00:00,,,2006-04-10 08:00,2006-04-14 17:00,,,,,PT_Normal,,,,,dMrjheGnSmWnM9R9ddl0OQ,,,,N,0,0,,,2007-02-01 02:42,2007-02-04 01:05,hbe4678,hbe4678,,,0
2199,12458380,14517,6816088,13330,1,100,N,N,N,CP_Units,TT_Task,DT_FixedDUR2,RV_OK,TK_Complete,PK000MU29J,Final Negotiate/Interim Award - MU292,,,,0,0,0,0,40,0,0,0,,2006-04-19 00:00,2006-04-19 00:00,2007-05-07 08:00,2007-05-07 08:00,,2007-01-27 00:00,2007-01-27 00:00,,,2006-05-02 08:00,2006-05-08 17:00,,,,,PT_Normal,,,,,a+LARWZPQ523tYMclpz+og,,,,N,0,0,,,2007-02-01 02:42,2007-02-04 01:05,hbe4678,hbe4678,,,0
2200,12458381,14517,6816088,13330,1,100,N,N,N,CP_Units,TT_Task,DT_FixedDUR2,RV_OK,TK_Complete,PK000MU29K,MU292 - Fabricate/PO Promise 2404-L,,,,0,0,0,0,960,0,0,0,,2006-04-19 00:00,2006-09-18 00:00,2007-10-29 08:01,2007-10-29 08:01,,2007-01-27 00:00,2007-01-27 00:00,,,2006-04-17 08:00,2006-09-29 17:00,,,,,PT_Normal,,,,,sKmIPeQlSSyMFaK06xVneQ,,,,N,0,0,,,2007-02-01 02:42,2007-02-04 01:05,hbe4678,hbe4678,,,0
2201,12458382,14517,6816088,4050,1,0,N,N,N,CP_Units,TT_Task,DT_FixedDUR2,RV_OK,TK_NotStart,PK000MU29O,MU292 - Transport/Customes 2404-L,,2200.01666666667,0.0166666666666667,168,0,0,0,240,0,0,0,,,,2007-12-10 08:01,2007-12-31 08:01,,2007-03-10 08:00,2007-03-30 17:00,2007-03-10 08:00,2007-03-30 17:00,2007-03-10 08:00,2007-04-08 17:00,,2007-12-10 08:01,2007-12-31 08:01,,PT_Normal,,,,,AkTDyRJvTzydpkxzDco+Gw,,,,N,0,0,,,2007-02-01 02:42,2007-02-04 01:00,hbe4678,hbe4678,2007-03-10 08:00,2007-03-30 17:00,168
2202,12458383,14517,6816088,13330,1,100,N,N,N,CP_Units,TT_Task,DT_FixedDUR2,RV_OK,TK_Complete,PK000MU29P,Issue Formal P.O. for  MU292,,,,0,0,0,0,24,0,0,0,,2006-04-19 00:00,2006-05-01 00:00,2007-10-29 08:01,2007-10-29 08:01,,2007-01-27 00:00,2007-01-27 00:00,,,2006-04-17 08:00,2006-04-19 17:00,,,,,PT_Normal,,,,,XDFfbBcrSuuSK976+kAerQ,,,,N,0,0,,,2007-02-01 02:42,2007-02-04 01:05,hbe4678,hbe4678,,,0
2203,12458384,14517,6816088,13330,1,100,N,N,N,CP_Units,TT_Task,DT_FixedDUR2,RV_OK,TK_Complete,PK000MU30G,Issue MU300 RFQ,,,,0,0,0,0,24,0,0,0,,2005-04-26 00:00,2005-04-28 00:00,2007-03-07 08:01,2007-03-07 08:01,,2007-01-27 00:00,2007-01-27 00:00,,,2005-06-14 08:00,2005-06-16 17:00,,,,,PT_Normal,,,,,Z9R4DqVbQKCvLObuWTj3PQ,,,,N,0,0,,,2007-02-01 02:42,2007-02-04 01:05,hbe4678,hbe4678,,,0
2204,12458385,14517,6816088,13330,1,100,N,N,N,CP_Units,TT_Task,DT_FixedDUR2,RV_OK,TK_Complete,PK000MU30H,Receive Quotes MU300,,,,0,0,0,0,120,0,0,0,,2005-04-29 00:00,2005-06-10 00:00,2007-03-07 08:01,2007-03-07 08:01,,2007-01-27 00:00,2007-01-27 00:00,,,2005-06-17 08:00,2005-07-11 17:00,,,,,PT_Normal,,,,,YVADL0JaQjy9alP51a7jnA,,,,N,0,0,,,2007-02-01 02:42,2007-02-04 01:05,hbe4678,hbe4678,,,0
2205,12458386,14517,6816088,13330,1,100,N,N,N,CP_Units,TT_Task,DT_FixedDUR2,RV_OK,TK_Complete,PK000MU30I,Eval Bids & Issue Recmd MU300,,,,0,0,0,0,40,0,0,0,,2005-06-10 00:00,2005-11-28 17:00,2007-03-07 08:01,2007-03-07 08:01,,2007-01-27 00:00,2007-01-27 00:00,,,2005-08-01 08:00,2005-08-05 17:00,,,,,PT_Normal,,,,,CkIg5zbrR+uxO+WfwX65tg,,,,N,0,0,,,2007-02-01 02:42,2007-02-04 01:05,hbe4678,hbe4678,,,0
2206,12458387,14517,6816088,13330,1,100,N,N,N,CP_Units,TT_Task,DT_FixedDUR2,RV_OK,TK_Complete,PK000MU30J,Final Negotiate/Interim Award - MU300,,,,0,0,0,0,24,0,0,0,,2005-11-25 00:00,2005-11-29 00:00,2007-03-07 08:01,2007-03-07 08:01,,2007-01-27 00:00,2007-01-27 00:00,,,2005-11-14 08:00,2005-11-16 17:00,,,,,PT_Normal,,,,,mD668uZLTJSW1VhCP+IjFA,,,,N,0,0,,,2007-02-01 02:42,2007-02-04 01:05,hbe4678,hbe4678,,,0
2207,12458388,14517,6816088,13330,1,100,N,N,N,CP_Units,TT_Task,DT_FixedDUR2,RV_OK,TK_Complete,PK000MU30K,MU300 - Fabricate/PO Promise 2102-U,,,,0,0,0,0,1120,0,0,0,,2005-12-20 00:00,2006-11-29 08:01,2007-05-15 08:01,2007-05-15 08:01,,2007-01-27 00:00,2007-01-27 00:00,,,2006-01-03 08:00,2006-07-17 17:00,,,,,PT_Normal,,,,,XMVeYKt5Tcm1r/pkpARpkA,,,,N,0,0,,,2007-02-01 02:42,2007-02-04 01:05,hbe4678,hbe4678,,,0
2208,12458389,14517,6816088,4050,1,0,N,N,N,CP_Units,TT_Task,DT_FixedDUR2,RV_OK,TK_NotStart,PK000MU30O,MU300 - Transport/Customes 2102-U,,864.016666666667,0.0166666666666667,168,0,0,0,240,0,0,0,,,,2007-06-26 08:01,2007-07-17 08:01,,2007-03-10 08:00,2007-03-30 17:00,2007-03-10 08:00,2007-03-30 17:00,2007-03-10 08:00,2007-04-08 17:00,,2007-06-26 08:01,2007-07-17 08:01,,PT_Normal,,,,,lP2l7Lv2Suic5mzeikNbBA,,,,N,0,0,,,2007-02-01 02:42,2007-02-04 01:00,hbe4678,hbe4678,2007-03-10 08:00,2007-03-30 17:00,168
2209,12458390,14517,6816088,13330,1,100,N,N,N,CP_Units,TT_Task,DT_FixedDUR2,RV_OK,TK_Complete,PK000MU30P,Issue Formal P.O. for  MU300,,,,0,0,0,0,24,0,0,0,,2005-12-20 00:00,2006-02-16 00:00,2007-05-15 08:01,2007-05-15 08:01,,2007-01-27 00:00,2007-01-27 00:00,,,2006-02-06 08:00,2006-02-08 17:00,,,,,PT_Normal,,,,,QwkahrfcTnOiMZmbbY+HjA,,,,N,0,0,,,2007-02-01 02:42,2007-02-04 01:05,hbe4678,hbe4678,,,0
2210,12458391,14517,6816088,13330,1,100,N,N,N,CP_Units,TT_Task,DT_FixedDUR2,RV_OK,TK_Complete,PK000MU31G,Issue MU310 RFQ,,,,0,0,0,0,24,0,0,0,,2005-09-28 00:00,2005-09-30 00:00,2007-01-09 08:01,2007-01-09 08:01,,2007-01-27 00:00,2007-01-27 00:00,,,2005-11-09 08:00,2005-11-11 17:00,,,,,PT_Normal,,,,,l5RTrtD/RJWu/Z5F5eGGrQ,,,,N,0,0,,,2007-02-01 02:42,2007-02-04 01:05,hbe4678,hbe4678,,,0
2211,12458392,14517,6816088,13330,1,100,N,N,N,CP_Units,TT_Task,DT_FixedDUR2,RV_OK,TK_Complete,PK000MU31H,Receive Quotes MU310,,,,0,0,0,0,120,0,0,0,,2005-10-03 00:00,2005-10-24 00:00,2007-01-09 08:01,2007-01-09 08:01,,2007-01-27 00:00,2007-01-27 00:00,,,2005-11-14 08:00,2005-12-02 17:00,,,,,PT_Normal,,,,,pNRxfqFcRLS077Kj12E/KQ,,,,N,0,0,,,2007-02-01 02:42,2007-02-04 01:05,hbe4678,hbe4678,,,0
2212,12458393,14517,6816088,13330,1,100,N,N,N,CP_Units,TT_Task,DT_FixedDUR2,RV_OK,TK_Complete,PK000MU31I,Eval Bids & Issue Recmd MU310,,,,0,0,0,0,40,0,0,0,,2005-11-08 00:00,2006-02-03 17:00,2007-01-09 08:01,2007-01-09 08:01,,2007-01-27 00:00,2007-01-27 00:00,,,2005-11-14 08:00,2005-11-18 17:00,,,,,PT_Normal,,,,,oekkzvJCQwCphcpQPGM5Sw,,,,N,0,0,,,2007-02-01 02:42,2007-02-04 01:05,hbe4678,hbe4678,,,0
2213,12458394,14517,6816088,13330,1,100,N,N,N,CP_Units,TT_Task,DT_FixedDUR2,RV_OK,TK_Complete,PK000MU31J,Final Negotiate/Interim Award - MU310,,,,0,0,0,0,80,0,0,0,,2006-02-06 08:01,2006-02-14 00:00,2007-01-09 08:01,2007-01-09 08:01,,2007-01-27 00:00,2007-01-27 00:00,,,2006-02-06 08:01,2006-02-20 08:01,,,,,PT_Normal,,,,,NvfLdCJBS2W10rjhFbkchQ,,,,N,0,0,,,2007-02-01 02:42,2007-02-04 01:05,hbe4678,hbe4678,,,0
2214,12458395,14517,6816088,13330,1,100,N,N,N,CP_Units,TT_Task,DT_FixedDUR2,RV_OK,TK_Complete,PK000MM010,Project material responsibility matrix,,,,0,0,0,,200,,0,0,,2005-02-28 08:00,2005-06-03 17:00,2007-02-27 08:00,2007-02-27 08:00,,2007-01-27 00:00,2007-01-27 00:00,,,2005-02-28 08:00,2005-04-01 17:00,,,,,PT_Normal,,,,,SuALfho0RVmOqzG7PUvG8w,,,,N,0,0,,,2007-02-01 02:42,2007-02-04 01:05,hbe4678,hbe4678,,,0
2215,12458396,14517,6816088,13330,1,100,N,N,N,CP_Units,TT_Task,DT_FixedDUR2,RV_OK,TK_Complete,PK000MM015,IPMS Initial Setup,,,,0,,0,,160,,,0,,2005-03-21 08:00,2005-04-15 17:00,2006-11-28 08:01,2006-11-28 08:01,,2007-01-27 00:00,2007-01-27 00:00,,,2005-03-21 08:00,2005-04-15 17:00,,,,,PT_Normal,,,,,mVx1YmylQn6TldO2P3aX8w,,,,N,,,,,2007-02-01 02:42,2007-02-04 01:05,hbe4678,hbe4678,,,0
2216,12458397,14517,6816088,13330,1,100,N,N,N,CP_Units,TT_Task,DT_FixedDUR2,RV_OK,TK_Complete,PK000MM020,Project requisition matrix,,,,0,,0,,128,,,0,,2005-02-28 08:00,2005-04-01 17:00,2006-11-28 08:01,2006-11-28 08:01,,2007-01-27 00:00,2007-01-27 00:00,,,2005-02-28 08:00,2005-03-21 17:00,,,,,PT_Normal,,,,,1rRUc8JsTrGxk2S+sJVTzA,,,,N,,,,,2007-02-01 02:42,2007-02-04 01:05,hbe4678,hbe4678,,,0
2217,12458398,14517,6816088,13330,1,100,N,N,N,CP_Units,TT_Task,DT_FixedDUR2,RV_OK,TK_Complete,PK000MM025,Piping Bulk Quanities for Mill Run Commitment,,,,0,0,0,,320,,0,0,,2005-03-07 08:00,2005-06-06 00:00,2007-02-27 08:00,2007-02-27 08:00,,2007-01-27 00:00,2007-01-27 00:00,,,2005-03-07 08:00,2005-04-29 17:00,,,,,PT_Normal,,,,,KyDHV6TMRny0BYAu6OYpCA,,,,N,0,0,,,2007-02-01 02:42,2007-02-04 01:05,hbe4678,hbe4678,,,0
2218,12458399,14517,6816088,13330,1,100,N,N,N,CP_Units,TT_Task,DT_FixedDUR2,RV_OK,TK_Complete,PK000MU35K,MU350 - Fabricate/PO Promise 101-U DEAERATOR,,,,0,0,0,0,1040,0,0,0,,2005-09-09 00:00,2006-05-24 00:00,2007-12-04 08:01,2007-12-04 08:01,,2007-01-27 00:00,2007-01-27 00:00,,,2005-08-29 08:00,2006-02-28 17:00,,,,,PT_Normal,,,,,1Oep+d49R9GUrYbGwQiciA,,,,N,0,0,,,2007-02-01 02:42,2007-02-04 01:05,hbe4678,hbe4678,,,0
2219,12458400,14517,6816088,13330,1,100,N,N,N,CP_Units,TT_Task,DT_FixedDUR2,RV_OK,TK_Complete,PK000MU35M,Requote/Bid Condition/Final Tab - MU350,,,,0,0,0,0,160,0,0,0,,2005-05-27 08:00,2005-08-15 00:00,2007-05-03 08:01,2007-05-03 08:01,,2007-01-27 00:00,2007-01-27 00:00,,,2005-05-27 08:00,2005-06-24 17:00,,,,,PT_Normal,,,,,MJBxDwStTs2RY/GJ7OCubg,,,,N,0,0,,,2007-02-01 02:42,2007-02-04 01:05,hbe4678,hbe4678,,,0
2220,12458401,14517,6816088,13330,1,100,N,N,N,CP_Units,TT_Task,DT_FixedDUR2,RV_OK,TK_Complete,PK000MU35O,MU350 - Transport/Customes 101-U DEAERATOR,,,,0,0,0,0,240,0,0,0,,2006-08-16 00:00,2006-09-14 00:00,2007-12-04 08:01,2007-12-04 08:01,,2007-01-27 00:00,2007-01-27 00:00,,,2006-08-21 08:00,2006-09-29 17:00,,,,,PT_Normal,,,,,qbojfXj2R8SFqsMmWGG8Zg,,,,N,0,0,,,2007-02-01 02:42,2007-02-04 01:05,hbe4678,hbe4678,,,0
2221,12458402,14517,6816088,13330,1,100,N,N,N,CP_Units,TT_Task,DT_FixedDUR2,RV_OK,TK_Complete,PK000MU35P,Issue Formal P.O. for  MU350,,,,0,0,0,0,24,0,0,0,,2005-09-09 00:00,2005-10-24 00:00,2007-12-04 08:01,2007-12-04 08:01,,2007-01-27 00:00,2007-01-27 00:00,,,2005-09-12 08:00,2005-09-14 17:00,,,,,PT_Normal,,,,,BfQG34RnS3649zTl9iQnkQ,,,,N,0,0,,,2007-02-01 02:42,2007-02-04 01:05,hbe4678,hbe4678,,,0
2222,12458403,14517,6816088,13330,1,100,N,N,N,CP_Units,TT_Task,DT_FixedDUR2,RV_OK,TK_Complete,PK000MU41G,Issue MU410 RFQ,,,,0,0,0,0,48,0,0,0,,2005-04-19 09:00,2005-04-21 00:00,2007-03-07 08:01,2007-03-07 08:01,,2007-01-27 00:00,2007-01-27 00:00,,,2005-04-19 09:00,2005-04-27 09:00,,,,,PT_Normal,,,,,IQkm1yzFRdaCHl0kYD1P5A,,,,N,0,0,,,2007-02-01 02:42,2007-02-04 01:05,hbe4678,hbe4678,,,0
2223,12458404,14517,6816088,13330,1,100,N,N,N,CP_Units,TT_Task,DT_FixedDUR2,RV_OK,TK_Complete,PK000MU41H,Receive Quotes MU410,,,,0,0,0,0,120,0,0,0,,2005-04-22 08:45,2005-05-26 00:00,2007-03-07 08:01,2007-03-07 08:01,,2007-01-27 00:00,2007-01-27 00:00,,,2005-04-22 08:45,2005-05-13 08:45,,,,,PT_Normal,,,,,Sd5gchapTHK1qO7ICCDSSA,,,,N,0,0,,,2007-02-01 02:42,2007-02-04 01:05,hbe4678,hbe4678,,,0
2224,12458405,14517,6816088,13330,1,100,N,N,N,CP_Units,TT_Task,DT_FixedDUR2,RV_OK,TK_Complete,PK000MU41I,Eval Bids & Issue Recmd MU410,,,,0,0,0,0,40,0,0,0,,2005-07-22 00:00,2005-08-24 00:00,2007-03-07 08:01,2007-03-07 08:01,,2007-01-27 00:00,2007-01-27 00:00,,,2005-07-18 08:00,2005-07-22 17:00,,,,,PT_Normal,,,,,RVQQkNKmTdOpXUMIvbxrmg,,,,N,0,0,,,2007-02-01 02:42,2007-02-04 01:05,hbe4678,hbe4678,,,0
2225,12458406,14517,6816088,13330,1,100,N,N,N,CP_Units,TT_Task,DT_FixedDUR2,RV_OK,TK_Complete,PK000MU41J,Final Negotiate/Interim Award - MU410,,,,0,0,0,0,80,0,0,0,,2005-08-24 00:00,2005-08-24 00:00,2007-03-07 08:01,2007-03-07 08:01,,2007-01-27 00:00,2007-01-27 00:00,,,2005-08-29 08:00,2005-09-09 17:00,,,,,PT_Normal,,,,,8yRAkDgZS3eLzRX+daRwpQ,,,,N,0,0,,,2007-02-01 02:42,2007-02-04 01:05,hbe4678,hbe4678,,,0
2226,12458407,14517,6816088,13330,1,100,N,N,N,CP_Units,TT_Task,DT_FixedDUR2,RV_OK,TK_Complete,PK000MU41K,MU410 - Fabricate/PO Promise 2002-U PKG BOILER,,,,0,0,0,0,1800,0,0,0,,2005-10-07 00:00,2006-07-12 00:00,2007-07-31 08:01,2007-07-31 08:01,,2007-01-27 00:00,2007-01-27 00:00,,,2005-10-17 08:00,2006-08-29 17:00,,,,,PT_Normal,,,,,tougm4hbRLK9jcx8Oj5q8Q,,,,N,0,0,,,2007-02-01 02:42,2007-02-04 01:05,hbe4678,hbe4678,,,0
2227,12458408,14517,6816088,13330,1,100,N,N,N,CP_Units,TT_Task,DT_FixedDUR2,RV_OK,TK_Complete,PK000MU41O,MU410 - Transport/Customes 2002-U PKG BOILER,,,,0,0,0,0,240,0,0,0,,2006-08-16 08:00,2006-09-26 00:00,2007-07-31 08:01,2007-07-31 08:01,,2007-01-27 00:00,2007-01-27 00:00,,,2006-08-16 08:00,2006-09-26 17:00,,,,,PT_Normal,,,,,OakLzlDnTyaJGdjopEMSSg,,,,N,0,0,,,2007-02-01 02:42,2007-02-04 01:05,hbe4678,hbe4678,,,0
2228,12458409,14517,6816088,13330,1,100,N,N,N,CP_Units,TT_Task,DT_FixedDUR2,RV_OK,TK_Complete,PK000MU41P,Issue Formal P.O. for  MU410,,,,0,0,0,0,24,0,0,0,,2005-08-24 00:00,2005-10-06 00:00,2007-03-07 08:01,2007-03-07 08:01,,2007-01-27 00:00,2007-01-27 00:00,,,2005-10-10 08:00,2005-10-12 17:00,,,,,PT_Normal,,,,,wOWEAwIkRkScNuD3WfrF8Q,,,,N,0,0,,,2007-02-01 02:42,2007-02-04 01:05,hbe4678,hbe4678,,,0
2229,12458410,14517,6816088,13330,1,100,N,N,N,CP_Units,TT_Task,DT_FixedDUR2,RV_OK,TK_Complete,PK000MU61G,Issue MU611 RFQ,,,,0,0,0,0,24,0,0,0,,2005-04-26 00:00,2005-05-05 00:00,2007-03-07 08:01,2007-03-07 08:01,,2007-01-27 00:00,2007-01-27 00:00,,,2005-08-25 16:30,2005-08-30 16:30,,,,,PT_Normal,,,,,S8PLJJ/HQzWMPzZKts5Xmw,,,,N,0,0,,,2007-02-01 02:42,2007-02-04 01:05,hbe4678,hbe4678,,,0
2230,12458411,14517,6816088,13330,1,100,N,N,N,CP_Units,TT_Task,DT_FixedDUR2,RV_OK,TK_Complete,PK000MU61H,Receive Quotes MU611,,,,0,0,0,0,120,0,0,0,,2005-05-06 08:00,2005-06-02 00:00,2007-03-07 08:01,2007-03-07 08:01,,2007-01-27 00:00,2007-01-27 00:00,,,2005-05-06 08:00,2005-05-26 17:00,,,,,PT_Normal,,,,,8DyaBRNxQKy6tJUqXNveSw,,,,N,0,0,,,2007-02-01 02:42,2007-02-04 01:05,hbe4678,hbe4678,,,0
2231,12458412,14517,6816088,13330,1,100,N,N,N,CP_Units,TT_Task,DT_FixedDUR2,RV_OK,TK_Complete,PK000MU61I,Eval Bids & Issue Recmd MU611,,,,0,0,0,0,40,0,0,0,,2005-06-03 00:00,2005-08-25 00:00,2007-03-07 08:01,2007-03-07 08:01,,2007-01-27 00:00,2007-01-27 00:00,,,2005-07-26 08:00,2005-08-01 17:00,,,,,PT_Normal,,,,,iKgjJ/uRSM2d5MpfK0CosQ,,,,N,0,0,,,2007-02-01 02:42,2007-02-04 01:05,hbe4678,hbe4678,,,0
2232,12458413,14517,6816088,13330,1,100,N,N,N,CP_Units,TT_Task,DT_FixedDUR2,RV_OK,TK_Complete,PK000MU31K,MU310 - Fabricate/PO Promise Injection System & Chlorination Unit,,,,0,0,0,0,640,0,0,0,,2006-02-14 00:00,2007-01-26 00:00,2007-04-20 08:00,2007-04-20 08:00,,2007-01-27 00:00,2007-01-27 00:00,,,2006-03-28 08:00,2006-07-17 17:00,,,,,PT_Normal,,,,,DNGleX+tRIOng58PSm9BLw,,,,N,0,0,,,2007-02-01 02:42,2007-02-04 01:05,hbe4678,hbe4678,,,0
2233,12458414,14517,6816088,13330,1,100,N,N,N,CP_Units,TT_Task,DT_FixedDUR2,RV_OK,TK_Complete,PK000MU31P,Issue Formal P.O. for  MU310,,,,0,0,0,0,24,0,0,0,,2006-02-14 00:00,2006-02-14 00:00,2007-04-20 08:00,2007-04-20 08:00,,2007-01-27 00:00,2007-01-27 00:00,,,2006-03-23 08:00,2006-03-27 17:00,,,,,PT_Normal,,,,,H3Wmr6q5QQOdKvuM1N/mkQ,,,,N,0,0,,,2007-02-01 02:42,2007-02-04 01:05,hbe4678,hbe4678,,,0
2234,12458415,14517,6816088,13330,1,100,N,N,N,CP_Units,TT_Task,DT_FixedDUR2,RV_OK,TK_Complete,PK000MU33G,Issue MU330 RFQ,,,,0,0,0,0,24,0,0,0,,2005-05-09 00:00,2005-05-10 00:00,2007-01-09 08:01,2007-01-09 08:01,,2007-01-27 00:00,2007-01-27 00:00,,,2005-06-13 08:00,2005-06-15 17:00,,,,,PT_Normal,,,,,dTsvisZrSPqN97aQGFRg9g,,,,N,0,0,,,2007-02-01 02:42,2007-02-04 01:05,hbe4678,hbe4678,,,0
2235,12458416,14517,6816088,13330,1,100,N,N,N,CP_Units,TT_Task,DT_FixedDUR2,RV_OK,TK_Complete,PK000MU33H,Receive Quotes MU330,,,,0,0,0,0,16,0,0,0,,2005-05-11 00:00,2005-06-20 00:00,2007-01-09 08:01,2007-01-09 08:01,,2007-01-27 00:00,2007-01-27 00:00,,,2005-06-03 08:00,2005-06-06 17:00,,,,,PT_Normal,,,,,NwYbirwmTjCMJEGxJEUkqQ,,,,N,0,0,,,2007-02-01 02:42,2007-02-04 01:05,hbe4678,hbe4678,,,0
2236,12458417,14517,6816088,13330,1,100,N,N,N,CP_Units,TT_Task,DT_FixedDUR2,RV_OK,TK_Complete,PK000MU33I,Eval Bids & Issue Recmd MU330,,,,0,0,0,0,40,0,0,0,,2005-06-20 00:00,2005-10-10 00:00,2007-01-09 08:01,2007-01-09 08:01,,2007-01-27 00:00,2007-01-27 00:00,,,2005-08-01 08:00,2005-08-05 17:00,,,,,PT_Normal,,,,,5JWsdEfLTtObUrk3DuUnbQ,,,,N,0,0,,,2007-02-01 02:42,2007-02-04 01:05,hbe4678,hbe4678,,,0
2237,12458418,14517,6816088,13330,1,100,N,N,N,CP_Units,TT_Task,DT_FixedDUR2,RV_OK,TK_Complete,PK000MU33J,Final Negotiate/Interim Award - MU330,,,,0,0,0,0,80,0,0,0,,2005-10-10 00:00,2005-11-29 00:00,2007-01-09 08:01,2007-01-09 08:01,,2007-01-27 00:00,2007-01-27 00:00,,,2005-10-17 08:00,2005-10-28 17:00,,,,,PT_Normal,,,,,lEhkkOOqT/yDyHSZMzWukQ,,,,N,0,0,,,2007-02-01 02:42,2007-02-04 01:05,hbe4678,hbe4678,,,0
2238,12458419,14517,6816088,13330,1,100,N,N,N,CP_Units,TT_Task,DT_FixedDUR2,RV_OK,TK_Complete,PK000MU33K,MU330 - Fabricate/PO Promise 2001-U,,,,0,0,0,0,2080,0,0,0,,2005-10-31 08:00,2006-12-12 00:00,2007-07-03 08:01,2007-07-03 08:01,,2007-01-27 00:00,2007-01-27 00:00,,,2005-10-31 08:00,2006-10-31 17:00,,,,,PT_Normal,,,,,sCp7ryHGT0y2bi3BrDrT5A,,,,N,0,0,,,2007-02-01 02:42,2007-02-04 01:05,hbe4678,hbe4678,,,0
2239,12458420,14517,6816088,4050,1,0,N,N,N,CP_Units,TT_Task,DT_FixedDUR2,RV_OK,TK_NotStart,PK000MU33O,MU330 - Transport/Customes 2001-U,,1256.01666666667,0.0166666666666667,168,0,0,0,240,0,0,0,,,,2007-08-14 08:01,2007-09-04 08:01,,2007-03-10 08:00,2007-03-30 17:00,2007-03-10 08:00,2007-03-30 17:00,2007-03-10 08:00,2007-04-08 17:00,,2007-08-14 08:01,2007-09-04 08:01,,PT_Normal,,,,,utU4RhnpS36uua+vzvdRWg,,,,N,0,0,,,2007-02-01 02:42,2007-02-04 01:00,hbe4678,hbe4678,2007-03-10 08:00,2007-03-30 17:00,168
2240,12458421,14517,6816088,13330,1,100,N,N,N,CP_Units,TT_Task,DT_FixedDUR2,RV_OK,TK_Complete,PK000MU33P,Issue Formal P.O. for  MU330,,,,0,0,0,0,24,0,0,0,,2005-10-27 00:00,2006-03-23 00:00,2007-07-03 08:01,2007-07-03 08:01,,2007-01-27 00:00,2007-01-27 00:00,,,2005-11-28 08:00,2005-11-30 17:00,,,,,PT_Normal,,,,,aMBLjEHXRDS1TXTz8opPLw,,,,N,0,0,,,2007-02-01 02:42,2007-02-04 01:05,hbe4678,hbe4678,,,0
2241,12458422,14517,6816088,13329,0,100,N,N,N,CP_Units,TT_FinMile,DT_FixedDrtn,RV_OK,TK_Complete,PK000PIA1J,"Bulk Piping A/G & U/G - Receive at Site FIRST (CS,SS,U/G)",,,,0,0,0,0,0,0,0,0,,2006-07-03 00:00,2006-07-03 00:00,2007-02-27 08:00,2007-02-27 08:00,,2007-01-27 00:00,2007-01-27 00:00,,,2006-08-19 08:01,2006-08-19 08:01,,,,,PT_Normal,,,,,qLZqUzIzRu+EeEgQj7BvNQ,HrtBIrlnfUucl124vOpB1x,,,N,0,0,,,2007-02-01 02:42,2007-02-04 01:05,hbe4678,hbe4678,,,0
2242,12458423,14517,6816088,13330,1,100,N,N,N,CP_Units,TT_Task,DT_FixedDUR2,RV_OK,TK_Complete,PK000PIA4L,Product Line Piping - Fab/Exworks Remaining +/- 1500 Mts.,,,,0,0,0,0,1040,0,0,0,,2006-08-02 00:00,2006-11-28 00:00,2008-01-28 08:01,2008-01-28 08:01,,2007-01-27 00:00,2007-01-27 00:00,,,2005-10-31 08:00,2006-05-02 17:00,,,,,PT_Normal,,,,,jOisWsyLTISlPcICqOVoCQ,G7w/Bv5w7EWDRATGFaTr+h,,,N,0,0,,,2007-02-01 02:42,2007-02-04 01:05,hbe4678,hbe4678,,,0
2243,12458424,14517,6816088,13330,1,100,N,N,N,CP_Units,TT_Task,DT_FixedDUR2,RV_OK,TK_Complete,PK020IC214,020 Control Valves - Transport & Deliver,,,,0,0,0,0,400,0,0,0,,2006-11-20 00:00,2006-12-29 00:00,2009-02-15 08:01,2009-02-15 08:01,,2007-01-27 00:00,2007-01-27 00:00,,,2007-06-29 08:00,2007-09-06 17:00,,,,,PT_Normal,,,,,LBBQEAwoQUCxDsilPas2yw,,,,N,0,0,,,2007-02-01 02:42,2007-02-04 01:05,hbe4678,hbe4678,,,0
2244,12458425,14517,6816088,13330,1,100,N,N,N,CP_Units,TT_Task,DT_FixedDUR2,RV_OK,TK_Complete,PK000MU61J,Final Negotiate/Interim Award - MU611,,,,0,0,0,0,80,0,0,0,,2005-08-26 00:00,2005-08-29 00:00,2007-03-07 08:01,2007-03-07 08:01,,2007-01-27 00:00,2007-01-27 00:00,,,2005-08-29 08:00,2005-09-09 17:00,,,,,PT_Normal,,,,,FOJHFDZBQN+7l+F1+qhoUw,,,,N,0,0,,,2007-02-01 02:42,2007-02-04 01:05,hbe4678,hbe4678,,,0
2245,12458426,14517,6816088,13330,1,100,N,N,N,CP_Units,TT_Task,DT_FixedDUR2,RV_OK,TK_Complete,PK000MU61K,"MU611 - Fabricate/PO Promise 2101-U, 2101-UJA Thru UJG CW TWR & Fans",,,,0,0,0,0,1120,0,0,0,,2005-10-10 00:00,2006-05-15 00:00,2007-04-08 08:01,2007-04-08 08:01,,2007-01-27 00:00,2007-01-27 00:00,,,2005-10-17 08:00,2006-05-02 17:00,,,,,PT_Normal,,,,,exABsWKySCybeMiNmOdSeA,,,,N,0,0,,,2007-02-01 02:42,2007-02-04 01:05,hbe4678,hbe4678,,,0
2246,12458427,14517,6816088,13330,1,100,N,N,N,CP_Units,TT_Task,DT_FixedDUR2,RV_OK,TK_Complete,PK000MU61O,"MU611 - Transport/Customes 2101-U, 2101-UJA Thru UJG CW TWR & Fans",,,,0,0,0,0,240,0,0,0,,2006-05-29 00:00,2006-07-14 00:00,2007-04-08 08:01,2007-04-08 08:01,,2007-01-27 00:00,2007-01-27 00:00,,,2006-07-17 08:00,2006-08-25 17:00,,,,,PT_Normal,,,,,LjoCNZEOSMOHXMbGqPtX1w,,,,N,0,0,,,2007-02-01 02:42,2007-02-04 01:05,hbe4678,hbe4678,,,0
2247,12458428,14517,6816088,13330,1,100,N,N,N,CP_Units,TT_Task,DT_FixedDUR2,RV_OK,TK_Complete,PK000MU61P,Issue Formal P.O. for  MU611,,,,0,0,0,0,24,0,0,0,,2005-08-29 00:00,2005-10-04 00:00,2007-03-07 08:01,2007-03-07 08:01,,2007-01-27 00:00,2007-01-27 00:00,,,2005-09-12 08:00,2005-09-14 17:00,,,,,PT_Normal,,,,,rOhihhFXSUmIkMLTYOtmlg,,,,N,0,0,,,2007-02-01 02:42,2007-02-04 01:05,hbe4678,hbe4678,,,0
2248,12458429,14517,6816088,13330,1,100,N,N,N,CP_Units,TT_Task,DT_FixedDUR2,RV_OK,TK_Complete,PK000PE030,Coating Supplier of Choice Selection,,,,0,0,0,,200,,0,0,,2005-03-21 08:00,2005-06-03 17:00,2007-02-27 08:00,2007-02-27 08:00,,2007-01-27 00:00,2007-01-27 00:00,,,2005-03-21 08:00,2005-04-22 17:00,,,,,PT_Normal,,,,,vh+9SFRFSDW6wibHyfJSZQ,,,,N,0,0,,,2007-02-01 02:42,2007-02-04 01:05,hbe4678,hbe4678,,,0
2249,12458430,14517,6816088,13330,1,100,N,N,N,CP_Units,TT_Task,DT_FixedDUR2,RV_OK,TK_Complete,PK000PK005,Implement use of Procuri and funct'nality (Req?),,,,0,,0,,40,,,0,,2005-02-28 08:00,2005-03-04 17:00,2007-02-27 08:00,2007-02-27 08:00,,2007-01-27 00:00,2007-01-27 00:00,,,2005-02-28 08:00,2005-03-04 17:00,,,,,PT_Normal,,,,,SYGUEoJlQSeY2x/hyxiPSQ,,,,N,,,,,2007-02-01 02:42,2007-02-04 01:05,hbe4678,hbe4678,,,0
2250,12458431,14517,6816088,13330,1,100,N,N,N,CP_Units,TT_LOE,DT_FixedDUR2,RV_OK,TK_Complete,PK000PK01C,Prepare/Issue Critical & Prelim. ERW's to Proc.,,,,0,,0,,160,,,0,,2005-03-14 08:00,2005-04-08 17:00,,,,,,,,2005-03-14 08:00,2005-04-08 17:00,,,,,PT_Normal,,,,,GLHwulOFROGbR9PA0tVq3A,,,,N,,,,,2007-02-01 02:42,2007-02-01 02:43,hbe4678,hbe4678,,,0
2251,12458432,14517,6816088,13330,1,100,N,N,N,CP_Units,TT_Task,DT_FixedDUR2,RV_OK,TK_Complete,PK000PK020,Meeting w/ doc mngmnt & eng. (work process) TREQ,,,,0,,0,,80,,,0,,2005-03-21 08:00,2005-03-30 17:00,2007-02-27 08:00,2007-02-27 08:00,,2007-01-27 00:00,2007-01-27 00:00,,,2005-03-21 08:00,2005-04-01 17:00,,,,,PT_Normal,,,,,gXjDeC6gRUiXBP1ENvhJvg,,,,N,,,,,2007-02-01 02:42,2007-02-04 01:05,hbe4678,hbe4678,,,0
2252,12458433,14517,6816088,13330,1,100,N,N,N,CP_Units,TT_Task,DT_FixedDUR2,RV_OK,TK_Complete,PK000PK035,Review ITP as with eng.,,,,0,,0,,200,,,0,,2005-03-04 08:00,2005-04-15 17:00,2007-02-27 08:00,2007-02-27 08:00,,2007-01-27 00:00,2007-01-27 00:00,,,2005-03-04 08:00,2005-04-07 17:00,,,,,PT_Normal,,,,,/TOqxsBPQYSQpoKvKvH9RQ,,,,N,,,,,2007-02-01 02:42,2007-02-04 01:05,hbe4678,hbe4678,,,0
2253,12458434,14517,6816088,13330,1,100,N,N,N,CP_Units,TT_Task,DT_FixedDUR2,RV_OK,TK_Complete,PK000PK040,Establish Project Warranty Criteria,,,,0,0,0,0,40,0,0,0,,2005-05-06 08:00,2005-05-12 17:00,2006-11-28 08:01,2006-11-28 08:01,,2007-01-27 00:00,2007-01-27 00:00,,,2005-05-06 08:00,2005-05-12 17:00,,,,,PT_Normal,,,,,SEgKxLR8Qo6/GHlb01GpjA,,,,N,0,0,,,2007-02-01 02:42,2007-02-04 01:05,hbe4678,hbe4678,,,0
2254,12458435,14517,6816088,13330,1,100,N,N,N,CP_Units,TT_Task,DT_FixedDUR2,RV_OK,TK_Complete,PK000PK045,Review ISSP work process with eng.,,,,0,,0,,40,,,0,,2005-04-11 08:00,2005-04-15 17:00,2007-02-27 08:00,2007-02-27 08:00,,2007-01-27 00:00,2007-01-27 00:00,,,2005-04-11 08:00,2005-04-15 17:00,,,,,PT_Normal,,,,,GqVrt6crT866912NcuUyPw,,,,N,,,,,2007-02-01 02:42,2007-02-04 01:05,hbe4678,hbe4678,,,0
2255,12458436,14517,6816088,13330,1,100,N,N,N,CP_Units,TT_Task,DT_FixedDUR2,RV_OK,TK_Complete,PK000PK050,Est Preselect low cost redundent bid items,,,,0,,0,,40,,,0,,2005-04-11 08:00,2005-04-15 17:00,2007-02-27 08:00,2007-02-27 08:00,,2007-01-27 00:00,2007-01-27 00:00,,,2005-04-11 08:00,2005-04-15 17:00,,,,,PT_Normal,,,,,CH1SwDiBRaequvWlC7nZDQ,,,,N,,,,,2007-02-01 02:42,2007-02-04 01:05,hbe4678,hbe4678,,,0
2256,12458437,14517,6816088,13330,1,100,N,N,N,CP_Units,TT_Task,DT_FixedDUR2,RV_OK,TK_Complete,PK020I131H,Fabricate / Exworks -  Transmitters -Press.,,,,0,0,0,0,496,0,0,0,,2006-09-28 08:00,2006-12-28 00:00,2007-05-15 08:00,2007-05-15 08:00,,2007-01-27 00:00,2007-01-27 00:00,,,2006-09-28 08:00,2006-12-22 17:00,,,,,PT_Normal,,,,,mFe2/shjRJ6m4yM+seVjWQ,,,,N,0,0,,,2007-02-01 02:42,2007-02-04 01:05,hbe4678,hbe4678,,,0
2257,12458438,14517,6816088,13330,1,100,N,N,N,CP_Units,TT_Task,DT_FixedDUR2,RV_OK,TK_Complete,PK020IC210,020 Control Valves - Fabricate/Exworks,,,,0,0,0,0,1600,0,0,0,,2006-04-26 08:00,2006-12-04 00:00,2009-02-15 08:01,2009-02-15 08:01,,2007-01-27 00:00,2007-01-27 00:00,,,2006-04-26 08:00,2007-01-30 17:00,,,,,PT_Normal,,,,,WTJYVTwORxizCYWYf4WzHw,,,,N,0,0,,,2007-02-01 02:42,2007-02-04 01:05,hbe4678,hbe4678,,,0
2258,12458439,14517,6816088,13330,1,100,N,N,N,CP_Units,TT_Task,DT_FixedDUR2,RV_OK,TK_Complete,PK000MU35G,Issue MU350 RFQ,,,,0,,0,,40,,,0,,2005-04-11 08:00,2005-04-12 17:00,2007-12-04 08:01,2007-12-04 08:01,,2007-01-27 00:00,2007-01-27 00:00,,,2005-04-11 08:00,2005-04-15 17:00,,,,,PT_Normal,,,,,JSeX0ngTQUimANViDHjvKg,,,,N,,,,,2007-02-01 02:42,2007-02-04 01:05,hbe4678,hbe4678,,,0
2259,12458440,14517,6816088,13330,1,100,N,N,N,CP_Units,TT_Task,DT_FixedDUR2,RV_OK,TK_Complete,PK000MU35H,Receive Quotes MU350,,,,0,0,0,,120,,0,0,,2005-04-13 08:00,2005-05-06 17:00,2007-12-04 08:01,2007-12-04 08:01,,2007-01-27 00:00,2007-01-27 00:00,,,2005-04-13 08:00,2005-05-03 17:00,,,,,PT_Normal,,,,,jokznSPURp+IFLl03oFC1A,,,,N,0,0,,,2007-02-01 02:42,2007-02-04 01:05,hbe4678,hbe4678,,,0
2260,12458441,14517,6816088,13330,1,100,N,N,N,CP_Units,TT_Task,DT_FixedDUR2,RV_OK,TK_Complete,PK000MU35I,Eval Bids & Issue Recmd MU350,,,,0,0,0,0,40,0,0,0,,2005-05-23 00:00,2005-05-27 00:00,2007-12-04 08:01,2007-12-04 08:01,,2007-01-27 00:00,2007-01-27 00:00,,,2005-06-27 08:00,2005-07-05 17:00,,,,,PT_Normal,,,,,lkXWM9TYQFyiOoKXrEeAiA,,,,N,0,0,,,2007-02-01 02:42,2007-02-04 01:05,hbe4678,hbe4678,,,0
2261,12458442,14517,6816088,13330,1,100,N,N,N,CP_Units,TT_Task,DT_FixedDUR2,RV_OK,TK_Complete,PK000MU35J,Final Negotiate/Interim Award - MU350,,,,0,0,0,0,80,0,0,0,,2005-08-29 08:00,2005-09-09 17:00,2007-05-03 08:01,2007-05-03 08:01,,2007-01-27 00:00,2007-01-27 00:00,,,2005-08-29 08:00,2005-09-09 17:00,,,,,PT_Normal,,,,,sAyCN3cVSNq2LXNc8sB2lA,,,,N,0,0,,,2007-02-01 02:42,2007-02-04 01:05,hbe4678,hbe4678,,,0
2262,12458443,14517,6816088,4050,1,0,N,N,N,CP_Units,TT_Task,DT_FixedDUR2,RV_OK,TK_NotStart,PK000MB71O,MB710 - Transport/Customes 2202-B/BL Storage Flare & Flame FRT Gen.,,2688.01666666667,0.0166666666666667,168,0,0,0,240,0,0,0,,,,2008-02-09 08:01,2008-03-01 08:01,,2007-03-10 08:00,2007-03-30 17:00,2007-03-10 08:00,2007-03-30 17:00,2007-03-10 08:00,2007-04-08 17:00,,2008-02-09 08:01,2008-03-01 08:01,,PT_Normal,,,,,66ySY/VVRtG9cqWzYbS29w,kfB2PMiZ4kGAI3zDB23HeB,,,N,0,0,,,2007-02-01 02:42,2007-02-04 01:00,hbe4678,hbe4678,2007-03-10 08:00,2007-03-30 17:00,168
2263,12458444,14517,6816088,13330,1,100,N,N,N,CP_Units,TT_Task,DT_FixedDUR2,RV_OK,TK_Complete,PK000MB71P,Issue Formal P.O. for  MB710,,,,0,0,0,0,24,0,0,0,,2006-02-06 00:00,2006-02-20 08:00,2007-12-31 08:00,2007-12-31 08:00,,2007-01-27 00:00,2007-01-27 00:00,,,2006-01-30 08:00,2006-02-01 17:00,,,,,PT_Normal,,,,,fwap9jA8Q+qac3aoqcaNbw,aXpJA0f8sEa+k3YRKx0q9B,,,N,0,0,,,2007-02-01 02:42,2007-02-04 01:05,hbe4678,hbe4678,,,0
2264,12458445,14517,6816088,13330,1,100,N,N,N,CP_Units,TT_Task,DT_FixedDUR2,RV_OK,TK_Complete,PK000MB71G,Issue MB710 RFQ,,,,0,0,0,0,24,0,0,0,,2005-10-14 00:00,2005-10-18 00:00,2007-02-07 08:01,2007-02-07 08:01,,2007-01-27 00:00,2007-01-27 00:00,,,2005-08-08 08:00,2005-08-10 17:00,,,,,PT_Normal,,,,,o7S146d2TgSqehBTuKyVmA,hDyhxXUFG0iCMZaArpfooB,,,N,0,0,,,2007-02-01 02:42,2007-02-04 01:05,hbe4678,hbe4678,,,0
2265,12458446,14517,6816088,13330,1,100,N,N,N,CP_Units,TT_Task,DT_FixedDUR2,RV_OK,TK_Complete,PK000IC35G,DCS - Interim Award,,,,0,0,0,0,40,0,0,0,,2005-09-09 00:00,2005-11-11 17:00,2007-04-16 08:00,2007-04-16 08:00,,2007-01-27 00:00,2007-01-27 00:00,,,2005-09-26 08:00,2005-09-30 17:00,,,,,PT_Normal,,,,,IjBTwBq2Rr6PSfj/qOaFMA,,,,N,0,0,,,2007-02-01 02:42,2007-02-04 01:05,hbe4678,hbe4678,,,0
2266,12458447,14517,6816088,13330,1,100,N,N,N,CP_Units,TT_Task,DT_FixedDUR2,RV_OK,TK_Complete,PK000IC35H,DCS - Fabricate Hardware,,,,0,0,0,0,640,0,0,0,,2005-11-21 00:00,2006-08-31 00:00,2007-04-16 08:00,2007-04-16 08:00,,2007-01-27 00:00,2007-01-27 00:00,,,2006-10-02 08:00,2007-01-19 17:00,,,,,PT_Normal,,,,,P4P8wAj4QB6HWHYSZr2tQA,,,,N,0,0,,,2007-02-01 02:42,2007-02-04 01:05,hbe4678,hbe4678,,,0
2267,12458448,14517,6816088,13330,1,100,N,N,N,CP_Units,TT_Task,DT_FixedDUR2,RV_OK,TK_Complete,PK000IC35K,DCS - Formal Award,,,,0,0,0,0,80,0,0,0,,2005-09-12 00:00,2005-11-17 00:00,2007-04-16 08:00,2007-04-16 08:00,,2007-01-27 00:00,2007-01-27 00:00,,,2005-11-25 08:00,2005-12-08 17:00,,,,,PT_Normal,,,,,uMdDDSloQOqYrIXcCaRb8g,,,,N,0,0,,,2007-02-01 02:42,2007-02-04 01:05,hbe4678,hbe4678,,,0
2268,12458449,14517,6816088,13330,1,100,N,N,N,CP_Units,TT_Task,DT_FixedDUR2,RV_OK,TK_Complete,PK000IC35B,DCS - Inquiry REQ/RFQ,,,,0,0,0,0,160,0,0,0,,2005-03-16 00:00,2005-03-17 00:00,2007-04-16 08:00,2007-04-16 08:00,,2007-01-27 00:00,2007-01-27 00:00,,,2005-04-27 08:00,2005-05-24 17:00,,,,,PT_Normal,,,,,8ztKnWgaTNykMtcjNNPxEg,,,,N,0,0,,,2007-02-01 02:42,2007-02-04 01:05,hbe4678,hbe4678,,,0
2269,12458450,14517,6816088,13330,1,100,N,N,N,CP_Units,TT_Task,DT_FixedDUR2,RV_OK,TK_Complete,PK000IC35C,DCS - Receive Bids,,,,0,0,0,0,80,0,0,0,,2005-03-18 00:00,2005-04-13 00:00,2007-04-16 08:00,2007-04-16 08:00,,2007-01-27 00:00,2007-01-27 00:00,,,2005-05-25 08:00,2005-06-08 17:00,,,,,PT_Normal,,,,,HOqCGqU4Rrq1TO88LKBHcw,,,,N,0,0,,,2007-02-01 02:42,2007-02-04 01:05,hbe4678,hbe4678,,,0
2270,12458451,14517,6816088,13330,1,100,N,N,N,CP_Units,TT_Task,DT_FixedDUR2,RV_OK,TK_Complete,PK000IC35E,DCS - Eval Bids/Issue Recmd,,,,0,0,0,0,120,0,0,0,,2005-05-09 08:00,2005-06-30 17:00,2007-04-16 08:00,2007-04-16 08:00,,2007-01-27 00:00,2007-01-27 00:00,,,2005-05-09 08:00,2005-05-27 17:00,,,,,PT_Normal,,,,,Mq/QQR1bSwG1gCviUYl60g,,,,N,0,0,,,2007-02-01 02:42,2007-02-04 01:05,hbe4678,hbe4678,,,0
2271,12458452,14517,6816088,13330,1,100,N,N,N,CP_Units,TT_Task,DT_FixedDUR2,RV_OK,TK_Complete,PK000E001E,Sub Stations - Eval Bids/Issue Recmd,,,,0,0,0,0,120,0,0,0,,2006-05-29 08:00,2006-06-26 00:00,2007-03-27 08:01,2007-03-27 08:01,,2007-01-27 00:00,2007-01-27 00:00,,,2006-05-29 08:00,2006-06-16 17:00,,,,,PT_Normal,,,,,nyhBDR9aTdCpDGjdFo1Y0g,,,,N,0,0,,,2007-02-01 02:42,2007-02-04 01:05,hbe4678,hbe4678,,,0
2272,12458453,14517,6816088,13330,1,100,N,N,N,CP_Units,TT_Task,DT_FixedDUR2,RV_OK,TK_Complete,PK000E001G,Sub Stations - Interim Award,,,,0,0,0,0,40,0,0,0,,2006-06-27 00:00,2006-07-03 00:00,2007-03-27 08:01,2007-03-27 08:01,,2007-01-27 00:00,2007-01-27 00:00,,,2006-06-19 08:00,2006-06-23 17:00,,,,,PT_Normal,,,,,tAFKqRO+TkqDuTLr2Jq/XA,,,,N,0,0,,,2007-02-01 02:42,2007-02-04 01:05,hbe4678,hbe4678,,,0
2273,12458454,14517,6816088,13330,1,0,N,N,N,CP_Units,TT_Task,DT_FixedDUR2,RV_OK,TK_Active,PK000E001H,Sub Stations - Fab / Exworks,,496.016666666667,0,360,0,0,0,1200,0,0,0,,2006-09-18 08:00,,2007-04-25 08:01,2007-06-27 08:01,2007-03-30 17:00,2007-01-29 08:00,2007-03-30 17:00,2007-01-29 08:00,2007-03-30 17:00,2006-09-18 08:00,2007-04-13 17:00,,2007-04-25 08:01,2007-06-27 08:01,,PT_Normal,,,,,of9QMHChTcqODv2uFnTPeQ,,,,N,0,0,,,2007-02-01 02:42,2007-02-04 01:00,hbe4678,hbe4678,2007-01-29 08:00,2007-03-30 17:00,360
2274,12458455,14517,6816088,13330,1,100,N,N,N,CP_Units,TT_Task,DT_FixedDUR2,RV_OK,TK_Complete,PK000E001K,Sub Stations - Formal Award,,,,0,0,0,0,80,0,0,0,,2006-07-04 00:00,2006-07-13 00:00,2007-06-27 08:01,2007-06-27 08:01,,2007-01-27 00:00,2007-01-27 00:00,,,2006-09-18 08:00,2006-09-29 17:00,,,,,PT_Normal,,,,,mcEjH9XTT0KtmEHkLQK7FA,,,,N,0,0,,,2007-02-01 02:42,2007-02-04 01:05,hbe4678,hbe4678,,,0
2275,12458456,14517,6816088,13330,1,0,N,N,N,CP_Units,TT_Task,DT_FixedDUR2,RV_OK,TK_NotStart,PK000E001N,Sub Stations - Transport,,496.016666666667,0,240,0,0,0,400,0,0,0,,,,2007-06-27 08:01,2007-08-08 08:01,,2007-04-02 08:00,2007-05-11 17:00,2007-04-02 08:00,2007-05-11 17:00,2007-04-02 08:00,2007-06-08 17:00,,2007-06-27 08:01,2007-08-08 08:01,,PT_Normal,,,,,AGS6BLBaS+CtCWCQWL81XQ,,,,N,0,0,,,2007-02-01 02:42,2007-02-04 01:00,hbe4678,hbe4678,2007-04-02 08:00,2007-05-11 17:00,240
2276,12458457,14517,6816088,13330,1,100,N,N,N,CP_Units,TT_Task,DT_FixedDUR2,RV_OK,TK_Complete,PK000E002B,Transformer - Inquiry REQ/RFQ,,,,0,0,0,0,160,0,0,0,,2006-01-30 08:00,2006-02-16 00:00,2007-03-08 08:01,2007-03-08 08:01,,2007-01-27 00:00,2007-01-27 00:00,,,2006-01-30 08:00,2006-02-24 17:00,,,,,PT_Normal,,,,,r0g+P7ekQ/OAtuX4zKciPg,,,,N,0,0,,,2007-02-01 02:42,2007-02-04 01:05,hbe4678,hbe4678,,,0
2277,12458458,14517,6816088,13330,1,100,N,N,N,CP_Units,TT_Task,DT_FixedDUR2,RV_OK,TK_Complete,PK000E002C,Transformer - Receive Bids,,,,0,0,0,0,80,0,0,0,,2006-02-16 00:00,2006-04-04 00:00,2007-03-08 08:01,2007-03-08 08:01,,2007-01-27 00:00,2007-01-27 00:00,,,2006-02-27 08:00,2006-03-10 17:00,,,,,PT_Normal,,,,,CjzRVCpBTYCdtSWPlrhxHg,,,,N,0,0,,,2007-02-01 02:42,2007-02-04 01:05,hbe4678,hbe4678,,,0
2278,12458459,14517,6816088,13330,1,100,N,N,N,CP_Units,TT_Task,DT_FixedDUR2,RV_OK,TK_Complete,PK000E002E,Transformer - Eval Bids/Issue Recmd,,,,0,0,0,0,120,0,0,0,,2006-04-04 00:00,2006-07-17 00:00,2007-03-08 08:01,2007-03-08 08:01,,2007-01-27 00:00,2007-01-27 00:00,,,2006-04-10 08:00,2006-04-28 17:00,,,,,PT_Normal,,,,,7gR5r7TjQlWa/M+QVJFpDA,,,,N,0,0,,,2007-02-01 02:42,2007-02-04 01:05,hbe4678,hbe4678,,,0
2279,12458460,14517,6816088,13330,1,100,N,N,N,CP_Units,TT_Task,DT_FixedDUR2,RV_OK,TK_Complete,PK000E002G,Transformer - Interim Award,,,,0,0,0,0,40,0,0,0,,2006-07-18 00:00,2006-08-02 00:00,2007-03-08 08:01,2007-03-08 08:01,,2007-01-27 00:00,2007-01-27 00:00,,,2006-07-31 08:00,2006-08-04 17:00,,,,,PT_Normal,,,,,MMt9WAfYQj+FPCsWcREZbw,,,,N,0,0,,,2007-02-01 02:42,2007-02-04 01:05,hbe4678,hbe4678,,,0
2280,12458461,14517,6816088,13330,1,0,N,N,N,CP_Units,TT_Task,DT_FixedDUR2,RV_OK,TK_Active,PK000E002H,Transformer - Fab / Exworks,,224.016666666667,0,216,0,0,0,1200,0,0,0,,2006-07-24 00:00,,2007-03-08 08:01,2007-04-16 08:01,2007-03-06 17:00,2007-01-29 08:00,2007-03-06 17:00,2007-01-29 08:00,2007-03-06 17:00,2006-08-07 08:00,2007-03-02 17:00,,2007-03-08 08:01,2007-04-16 08:01,,PT_Normal,,,,,fc+kF/yXTuWCr04AXPm0Pg,,,,N,0,0,,,2007-02-01 02:42,2007-02-04 01:00,hbe4678,hbe4678,2007-01-29 08:00,2007-03-06 17:00,216
2281,12458462,14517,6816088,13330,1,100,N,N,N,CP_Units,TT_Task,DT_FixedDUR2,RV_OK,TK_Complete,PK000E002K,Transformer - Formal Award,,,,0,0,0,0,80,0,0,0,,2006-07-21 00:00,2006-08-02 00:00,2007-04-16 08:01,2007-04-16 08:01,,2007-01-27 00:00,2007-01-27 00:00,,,2006-08-07 08:00,2006-08-18 17:00,,,,,PT_Normal,,,,,7SD9v4OISpKZCp5nWqQLAA,,,,N,0,0,,,2007-02-01 02:42,2007-02-04 01:05,hbe4678,hbe4678,,,0
2282,12458463,14517,6816088,13330,1,0,N,N,N,CP_Units,TT_Task,DT_FixedDUR2,RV_OK,TK_NotStart,PK000E002N,Transformer - Transport,,224.016666666667,0,240,0,0,0,240,0,0,0,,,,2007-06-11 08:01,2007-07-23 08:01,,2007-05-02 08:00,2007-06-12 17:00,2007-05-02 08:00,2007-06-12 17:00,2007-05-02 08:00,2007-06-12 17:00,,2007-06-11 08:01,2007-07-23 08:01,,PT_Normal,,,,,LKGwWWnLQvmM8YYIczNxXg,,,,N,0,0,,,2007-02-01 02:42,2007-02-04 01:00,hbe4678,hbe4678,2007-05-02 08:00,2007-06-12 17:00,240
2283,12458464,14517,6816088,13330,1,100,N,N,N,CP_Units,TT_Task,DT_FixedDUR2,RV_OK,TK_Complete,PK000E001B,Sub Stations - Inquiry REQ/RFQ,,,,0,0,0,0,160,0,0,0,,2006-01-31 00:00,2006-01-31 00:00,2007-03-27 08:01,2007-03-27 08:01,,2007-01-27 00:00,2007-01-27 00:00,,,2006-01-30 08:00,2006-02-24 17:00,,,,,PT_Normal,,,,,h/WFynaQQ9Cd2lhJN5u30Q,,,,N,0,0,,,2007-02-01 02:42,2007-02-04 01:05,hbe4678,hbe4678,,,0
2284,12458465,14517,6816088,13330,1,100,N,N,N,CP_Units,TT_Task,DT_FixedDUR2,RV_OK,TK_Complete,PK000E001C,Sub Stations - Receive Bids,,,,0,0,0,0,80,0,0,0,,2006-01-31 00:00,2006-03-22 00:00,2007-03-27 08:01,2007-03-27 08:01,,2007-01-27 00:00,2007-01-27 00:00,,,2006-02-27 08:00,2006-03-10 17:00,,,,,PT_Normal,,,,,K9lQHsOsT1Ky1z8okBSjiA,,,,N,0,0,,,2007-02-01 02:42,2007-02-04 01:05,hbe4678,hbe4678,,,0
2285,12458466,14517,6816088,13330,1,0,N,N,N,CP_Units,TT_Task,DT_FixedDUR2,RV_OK,TK_Active,PK000MD34T,MD304 - Marshaling 108-DA/B,,1296.01666666667,0,240,0,0,0,336,0,0,0,,2006-12-06 08:00,,2007-09-12 08:01,2007-10-24 08:01,2007-03-09 17:00,2007-01-29 08:00,2007-03-09 17:00,2007-01-29 08:00,2007-03-09 17:00,2006-12-06 08:00,2007-02-01 17:00,,2007-09-12 08:01,2007-10-24 08:01,,PT_Normal,,,,,7T5qeFhqQxq+D09Or3BTHQ,6LADvAzP3kGv3EN9ZHZxeR,,,N,0,0,,,2007-02-01 02:42,2007-02-04 01:00,hbe4678,hbe4678,2007-01-29 08:00,2007-03-09 17:00,240
2286,12458467,14517,6816088,4050,1,0,N,N,N,CP_Units,TT_Task,DT_FixedDUR2,RV_OK,TK_NotStart,ZZ2100,MD304 - Transport/Customes 108-DA/B,,1824.01666666667,0.0166666666666667,168,0,0,0,240,0,0,0,,,,2007-10-24 08:01,2007-11-14 08:01,,2007-03-10 08:00,2007-03-30 17:00,2007-03-10 08:00,2007-03-30 17:00,2007-03-10 08:00,2007-04-08 17:00,,2007-10-24 08:01,2007-11-14 08:01,,PT_Normal,,,,,4VRVkSIRR+eYxKsK/RZcJA,DTSpgqKD4kSfsyT4wHe92B,,,N,0,0,,,2007-02-01 02:42,2007-02-04 01:00,hbe4678,hbe4678,2007-03-10 08:00,2007-03-30 17:00,168
2287,12458468,14517,6816088,13330,1,100,N,N,N,CP_Units,TT_Task,DT_FixedDUR2,RV_OK,TK_Complete,PK000PIA1E,Bulk Piping A/G & U/G - Reconfirm Pricing,,,,0,0,0,0,48,0,0,0,,2005-07-25 00:00,2005-08-01 00:00,2007-02-27 08:00,2007-02-27 08:00,,2007-01-27 00:00,2007-01-27 00:00,,,2005-10-17 08:00,2005-10-24 17:00,,,,,PT_Normal,,,,,EgIDEnesT3i+ujn9eW/Now,r1oL5raCTk2l+dlHLOIcbh,,,N,0,0,,,2007-02-01 02:42,2007-02-04 01:05,hbe4678,hbe4678,,,0
2288,12458469,14517,6816088,13330,1,100,N,N,N,CP_Units,TT_Task,DT_FixedDUR2,RV_OK,TK_Complete,PK000PIA1F,Bulk Piping A/G & U/G - Formal Award,,,,0,0,0,0,80,0,0,0,,2005-09-20 00:00,2005-10-04 00:00,2007-02-27 08:00,2007-02-27 08:00,,2007-01-27 00:00,2007-01-27 00:00,,,2005-10-25 08:00,2005-11-07 17:00,,,,,PT_Normal,,,,,hiKnn/YqTjCvANMl0T5/yA,3cL6DuCm80ik5sDy8OzLwx,,,N,0,0,,,2007-02-01 02:42,2007-02-04 01:05,hbe4678,hbe4678,,,0
2289,12458470,14517,6816088,13330,1,100,N,N,N,CP_Units,TT_Task,DT_FixedDUR2,RV_OK,TK_Complete,PK000PTA0E,Engineered Pipe Supports - Formal Award,,,,0,0,0,0,80,0,0,0,,2005-09-14 00:00,2006-01-30 00:00,2007-04-19 08:00,2007-04-19 08:00,,2007-01-27 00:00,2007-01-27 00:00,,,2006-06-28 08:00,2006-07-11 17:00,,,,,PT_Normal,,,,,f44tCK9hQ42P4harS5eFew,4cohgeqGaky362HbGRDZ9R,,,N,0,0,,,2007-02-01 02:42,2007-02-04 01:05,hbe4678,hbe4678,,,0
2290,12458471,14517,6816088,13330,1,100,N,N,N,CP_Units,TT_Task,DT_FixedDUR2,RV_OK,TK_Complete,PK000ML90K,ML900 - Fabricate/PO Promise Evap. Pond Spray Nzl.,,,,0,0,0,0,1120,0,0,0,,2006-05-03 00:00,2006-08-23 00:00,2007-06-21 08:00,2007-06-21 08:00,,2007-01-27 00:00,2007-01-27 00:00,,,2006-05-16 08:00,2006-11-27 17:00,,,,,PT_Normal,,,,,dHhb9FynSyKq1mwd0skNYQ,XWfVQCzuA0O1ZmbgvOuwjR,,,N,0,0,,,2007-02-01 02:42,2007-02-04 01:05,hbe4678,hbe4678,,,0
2291,12458472,14517,6816088,13330,1,0,N,N,N,CP_Units,TT_Task,DT_FixedDUR2,RV_OK,TK_NotStart,PK000ML90O,01A ML900 - Transport/Customes Evap. Pond Spray Nzl.,,824,0,240,0,0,0,240,0,0,0,,,,2007-07-05 08:00,2007-08-15 17:00,,2007-02-12 08:00,2007-03-23 17:00,2007-02-12 08:00,2007-03-23 17:00,2007-02-12 08:00,2007-03-23 17:00,,2007-07-05 08:00,2007-08-15 17:00,,PT_Normal,,,,,e9Uut9h9R2+qTKQflvZITA,L7DdmFJrmUSDXET0yZ3GKh,,,N,0,0,,,2007-02-01 02:42,2007-02-01 02:43,hbe4678,hbe4678,2007-02-12 08:00,2007-03-23 17:00,240
2292,12458473,14517,6816088,13330,1,100,N,N,N,CP_Units,TT_Task,DT_FixedDUR2,RV_OK,TK_Complete,PK000ML90P,Issue Formal P.O. for  ML900,,,,0,0,0,0,24,0,0,0,,2006-05-03 00:00,2006-05-15 17:00,2007-06-21 08:00,2007-06-21 08:00,,2007-01-27 00:00,2007-01-27 00:00,,,2006-05-16 08:00,2006-05-18 17:00,,,,,PT_Normal,,,,,DI8iJct2TV68pBiUePT/2A,MhaqbeZ3FEyZwjG6CToj5x,,,N,0,0,,,2007-02-01 02:42,2007-02-04 01:05,hbe4678,hbe4678,,,0
2293,12458474,14517,6816088,13330,1,0,N,N,N,CP_Units,TT_Task,DT_FixedDUR2,RV_OK,TK_Active,PK000ML90S,01A ML900 - Marshaling Evap. Pond Spray Nzl.,,824,0,80,0,0,0,320,0,0,0,,2006-11-01 08:00,,2007-06-21 08:00,2007-07-04 17:00,,2007-01-29 08:00,2007-02-09 17:00,2007-01-29 08:00,2007-02-09 17:00,2006-11-01 08:00,2006-12-26 17:00,,2007-06-21 08:00,2007-07-04 17:00,,PT_Normal,,,,,bIk295knQpGIpNrCPISqCg,eTXzPoLbVEWLwTOsBTVTzx,,,N,0,0,,,2007-02-01 02:42,2007-02-01 02:43,hbe4678,hbe4678,2007-01-29 08:00,2007-02-09 17:00,80
2294,12458475,14517,6816088,13330,1,0,N,N,N,CP_Units,TT_Task,DT_FixedDUR2,RV_OK,TK_Active,PK000MB71S,MB710 - Marshaling 2202-B/BL Storage Flare & Flame FRT Gen.,,1920,0,240,0,0,0,320,0,0,0,,2006-11-27 08:01,,2007-12-31 08:00,2008-02-08 17:00,2007-03-09 17:00,2007-01-29 08:00,2007-03-09 17:00,2007-01-29 08:00,2007-03-09 17:00,2006-11-27 08:01,2007-01-22 08:01,,2007-12-31 08:00,2008-02-08 17:00,,PT_Normal,,,,,qgQD0GLuSUaf/DsEiKI0cA,D9QMbVLvJk2yl3GKNgvEXh,,,N,0,0,,,2007-02-01 02:42,2007-02-01 02:43,hbe4678,hbe4678,2007-01-29 08:00,2007-03-09 17:00,240
2295,12458476,14517,6816088,13330,1,100,N,N,N,CP_Units,TT_Task,DT_FixedDUR2,RV_OK,TK_Complete,PK000ML90G,Issue ML900 RFQ,,,,0,,0,,24,,,0,,2006-01-10 00:00,2006-01-16 00:00,2007-02-07 08:01,2007-02-07 08:01,,2007-01-27 00:00,2007-01-27 00:00,,,2005-03-29 08:00,2005-03-31 17:00,,,,,PT_Normal,,,,,ZDsU1pZ9RYm5oTwfcJMowQ,lVv1D/8F5k2MnNMtUiHVhB,,,N,,,,,2007-02-01 02:42,2007-02-04 01:05,hbe4678,hbe4678,,,0
2296,12458477,14517,6816088,13330,1,100,N,N,N,CP_Units,TT_Task,DT_FixedDUR2,RV_OK,TK_Complete,PK000ML90H,Receive Quotes ML900,,,,0,0,0,,120,,0,0,,2006-01-16 00:00,2006-02-20 00:00,2007-02-07 08:01,2007-02-07 08:01,,2007-01-27 00:00,2007-01-27 00:00,,,2005-04-01 08:00,2005-04-21 17:00,,,,,PT_Normal,,,,,FIQQDVUeSA6hJCeu/GDeqg,f96RCfyfv06HGPViEAMZzR,,,N,0,0,,,2007-02-01 02:42,2007-02-04 01:05,hbe4678,hbe4678,,,0
2297,12458478,14517,6816088,13330,1,100,N,N,N,CP_Units,TT_Task,DT_FixedDUR2,RV_OK,TK_Complete,PK000ML90I,Eval Bids & Issue Recmd ML900,,,,0,0,0,0,40,0,0,0,,2006-02-03 00:00,2006-05-01 17:00,2007-04-02 08:00,2007-04-02 08:00,,2007-01-27 00:00,2007-01-27 00:00,,,2006-04-21 08:00,2006-04-27 17:00,,,,,PT_Normal,,,,,QkVAiYR+Th2jl/ogZ+nY8Q,YlOsRiMojUugZGMOFKwbCx,,,N,0,0,,,2007-02-01 02:42,2007-02-04 01:05,hbe4678,hbe4678,,,0
2298,12458479,14517,6816088,13330,1,100,N,N,N,CP_Units,TT_Task,DT_FixedDUR2,RV_OK,TK_Complete,PK000ML90J,Final Negotiate/Interim Award - ML900,,,,0,0,0,0,80,0,0,0,,2006-05-01 00:00,2006-05-03 00:00,2007-04-02 08:00,2007-04-02 08:00,,2007-01-27 00:00,2007-01-27 00:00,,,2006-05-02 08:00,2006-05-15 17:00,,,,,PT_Normal,,,,,W39cqT1YRX6cIJCirQx9Fw,YIiCBbNBKEiyOb8Z4BS2Sh,,,N,0,0,,,2007-02-01 02:42,2007-02-04 01:05,hbe4678,hbe4678,,,0
2299,12458480,14517,6816088,13330,1,100,N,N,N,CP_Units,TT_Task,DT_FixedDUR2,RV_OK,TK_Complete,PK000MB71H,Receive Quotes for MB710,,,,0,0,0,0,120,0,0,0,,2005-10-18 00:00,2005-11-14 00:00,2007-02-07 08:01,2007-02-07 08:01,,2007-01-27 00:00,2007-01-27 00:00,,,2005-08-11 08:00,2005-08-31 17:00,,,,,PT_Normal,,,,,3yngj1T9TG67GhJHMVJA5w,eqnVhAXzPEyBZBS/AYztNB,,,N,0,0,,,2007-02-01 02:42,2007-02-04 01:05,hbe4678,hbe4678,,,0
2300,12458481,14517,6816088,13330,1,100,N,N,N,CP_Units,TT_Task,DT_FixedDUR2,RV_OK,TK_Complete,PK000MB71I,Eval Bids & Issue Recmd MB710,,,,0,0,0,0,120,0,0,0,,2005-11-18 00:00,2006-01-31 00:00,2007-02-07 08:01,2007-02-07 08:01,,2007-01-27 00:00,2007-01-27 00:00,,,2005-11-14 08:00,2005-12-02 17:00,,,,,PT_Normal,,,,,PoXvxb3MTDq/qBF6/1Hofg,E7K4uQ1hCUalpaSGBTylbx,,,N,0,0,,,2007-02-01 02:42,2007-02-04 01:05,hbe4678,hbe4678,,,0
2301,12458482,14517,6816088,13330,1,100,N,N,N,CP_Units,TT_Task,DT_FixedDUR2,RV_OK,TK_Complete,PK000MB71J,Final Negotiate/Interim Award - MB710,,,,0,0,0,0,24,0,0,0,,2006-01-31 00:00,2006-02-06 00:00,2007-02-07 08:01,2007-02-07 08:01,,2007-01-27 00:00,2007-01-27 00:00,,,2005-12-19 08:00,2005-12-21 17:00,,,,,PT_Normal,,,,,EHR0ZSDKRLCyAglWEhQj5g,YuYtYQXrBkOZtJrsisxQmx,,,N,0,0,,,2007-02-01 02:42,2007-02-04 01:05,hbe4678,hbe4678,,,0
2302,12458483,14517,6816088,13330,1,100,N,N,N,CP_Units,TT_Task,DT_FixedDUR2,RV_OK,TK_Complete,PK000MB71K,MB710 - Fabricate/PO Promise 2202-B/BL Storage Flare & Flame FRT Gen.,,,,0,0,0,0,1040,0,0,0,,2006-02-06 00:00,2006-11-24 00:00,2007-12-31 08:00,2007-12-31 08:00,,2007-01-27 00:00,2007-01-27 00:00,,,2006-01-30 08:00,2006-07-28 17:00,,,,,PT_Normal,,,,,MU0sbaJ9QeCNwr9FFK6wsQ,GlhOkBaaHEyrJHxrsh//sB,,,N,0,0,,,2007-02-01 02:42,2007-02-04 01:05,hbe4678,hbe4678,,,0
2303,12458484,14517,6816088,13330,1,100,N,N,N,CP_Units,TT_Task,DT_FixedDUR2,RV_OK,TK_Complete,PK000MD22H,Receive Quotes for MD202,,,,0,0,0,,120,,0,0,,2005-04-01 08:00,2005-04-21 00:00,2007-05-07 08:00,2007-05-07 08:00,,2007-01-27 00:00,2007-01-27 00:00,,,2005-04-01 08:00,2005-04-21 17:00,,,,,PT_Normal,,,,,Atp4h58JQEmKNxqPDcuFhg,,,,N,0,0,,,2007-02-01 02:42,2007-02-04 01:05,hbe4678,hbe4678,,,0
2304,12458485,14517,6816088,13330,1,100,N,N,N,CP_Units,TT_Task,DT_FixedDUR2,RV_OK,TK_Complete,PK000MD22I,Eval Bids & Issue Recmd MD202,,,,0,0,0,0,40,0,0,0,,2005-05-20 00:00,2005-06-03 00:00,2007-05-07 08:00,2007-05-07 08:00,,2007-01-27 00:00,2007-01-27 00:00,,,2005-05-06 08:00,2005-05-12 17:00,,,,,PT_Normal,,,,,t5kC1k2pTq6KpnlSSmdTrg,,,,N,0,0,,,2007-02-01 02:42,2007-02-04 01:05,hbe4678,hbe4678,,,0
2305,12458486,14517,6816088,13330,1,100,N,N,N,CP_Units,TT_Task,DT_FixedDUR2,RV_OK,TK_Complete,PK000MD22J,Final Negotiate/Interim Award - MD202,,,,0,0,0,0,80,0,0,0,,2005-09-09 00:00,2005-09-16 17:00,2007-05-07 08:00,2007-05-07 08:00,,2007-01-27 00:00,2007-01-27 00:00,,,2005-08-29 08:00,2005-09-09 17:00,,,,,PT_Normal,,,,,Ow9fTbJoR5iqajTLeVKVdQ,,,,N,0,0,,,2007-02-01 02:42,2007-02-04 01:05,hbe4678,hbe4678,,,0
2306,12458487,14517,6816088,13330,1,100,N,N,N,CP_Units,TT_Task,DT_FixedDUR2,RV_OK,TK_Complete,PK000MD22K,MD202 - Fabricate/PO Promise TOWERS 103/105-E,,,,0,0,0,0,1800,0,0,0,,2005-09-16 00:00,2006-07-06 00:00,2007-10-20 08:01,2007-10-20 08:01,,2007-01-27 00:00,2007-01-27 00:00,,,2005-09-15 08:00,2006-07-28 17:00,,,,,PT_Normal,,,,,7z96tBvcSbK0q9pyQ7S4Xg,,,,N,0,0,,,2007-02-01 02:42,2007-02-04 01:05,hbe4678,hbe4678,,,0
2307,12458488,14517,6816088,13330,1,100,N,N,N,CP_Units,TT_Task,DT_FixedDUR2,RV_OK,TK_Complete,PK000MD22P,Issue Formal P.O. for  MD202,,,,0,0,0,0,80,0,0,0,,2005-09-26 08:00,2005-10-03 00:00,2007-05-07 08:00,2007-05-07 08:00,,2007-01-27 00:00,2007-01-27 00:00,,,2005-09-26 08:00,2005-10-07 17:00,,,,,PT_Normal,,,,,crTNk2AFRdavDxcAWYxxVQ,,,,N,0,0,,,2007-02-01 02:42,2007-02-04 01:05,hbe4678,hbe4678,,,0
2308,12458489,14517,6816088,13330,1,100,N,N,N,CP_Units,TT_Task,DT_FixedDUR2,RV_OK,TK_Complete,PK000MD31G,Issue MD301 RFQ,,,,0,,0,,40,,,0,,2005-03-21 08:00,2005-03-25 17:00,2007-04-16 08:01,2007-04-16 08:01,,2007-01-27 00:00,2007-01-27 00:00,,,2005-03-21 08:00,2005-03-25 17:00,,,,,PT_Normal,,,,,IPRB7fH0RiWHVBGtrM9RXw,,,,N,,,,,2007-02-01 02:42,2007-02-04 01:05,hbe4678,hbe4678,,,0
2309,12458490,14517,6816088,13330,1,100,N,N,N,CP_Units,TT_Task,DT_FixedDUR2,RV_OK,TK_Complete,PK000MD31H,Receive Quotes MD301,,,,0,0,0,,120,,0,0,,2005-03-28 08:00,2005-05-13 17:00,2007-04-16 08:01,2007-04-16 08:01,,2007-01-27 00:00,2007-01-27 00:00,,,2005-03-28 08:00,2005-04-15 17:00,,,,,PT_Normal,,,,,mf5L9s8nTgO5cJuRYvFFkw,,,,N,0,0,,,2007-02-01 02:42,2007-02-04 01:05,hbe4678,hbe4678,,,0
2310,12458491,14517,6816088,13330,1,100,N,N,N,CP_Units,TT_Task,DT_FixedDUR2,RV_OK,TK_Complete,PK000MD31I,Eval Bids & Issue Recmd MD301,,,,0,0,0,0,40,0,0,0,,2005-06-06 08:00,2005-06-10 17:00,2007-04-16 08:01,2007-04-16 08:01,,2007-01-27 00:00,2007-01-27 00:00,,,2005-06-06 08:00,2005-06-10 17:00,,,,,PT_Normal,,,,,HV+mr1vvRva0ZTW34elOpA,,,,N,0,0,,,2007-02-01 02:42,2007-02-04 01:05,hbe4678,hbe4678,,,0
2311,12458492,14517,6816088,13330,1,100,N,N,N,CP_Units,TT_Task,DT_FixedDUR2,RV_OK,TK_Complete,PK000MD31J,Final Negotiate/Interim Award - MD301,,,,0,0,0,0,80,0,0,0,,2005-09-09 00:00,2005-09-09 00:00,2007-04-16 08:01,2007-04-16 08:01,,2007-01-27 00:00,2007-01-27 00:00,,,2005-08-29 08:00,2005-09-09 17:00,,,,,PT_Normal,,,,,VnVrRPkuSJ+/OdIqeHOoaw,,,,N,0,0,,,2007-02-01 02:42,2007-02-04 01:05,hbe4678,hbe4678,,,0
2312,12458493,14517,6816088,13330,1,0,N,N,N,CP_Units,TT_Task,DT_FixedDUR2,RV_OK,TK_Active,PK000MD31K,MD301 - Fabricate/PO Promise 103-D,,440.016666666667,0,288,0,0,0,2720,0,0,0,,2005-09-09 00:00,,2007-04-16 08:01,2007-06-05 08:01,2007-03-19 17:00,2007-01-29 08:00,2007-03-19 17:00,2007-01-29 08:00,2007-03-19 17:00,2005-09-12 08:00,2007-01-02 17:00,,2007-04-16 08:01,2007-06-05 08:01,,PT_Normal,,,,,lfnzrPq0T2CfQF1LbO3Clg,,,,N,0,0,,,2007-02-01 02:42,2007-02-04 01:00,hbe4678,hbe4678,2007-01-29 08:00,2007-03-19 17:00,288
2313,12458494,14517,6816088,13330,1,100,N,N,N,CP_Units,TT_Task,DT_FixedDUR2,RV_OK,TK_Complete,PK000MD31M,Final Tab/Recmd - MD301,,,,0,0,0,0,160,0,0,0,,2005-05-18 08:00,2005-08-24 00:00,2007-04-16 08:01,2007-04-16 08:01,,2007-01-27 00:00,2007-01-27 00:00,,,2005-05-18 08:00,2005-06-15 17:00,,,,,PT_Normal,,,,,nOuXTr+pSo+PhxZdlJDzPQ,,,,N,0,0,,,2007-02-01 02:42,2007-02-04 01:05,hbe4678,hbe4678,,,0
2314,12458495,14517,6816088,13330,1,0,N,N,N,CP_Units,TT_Task,DT_FixedDUR2,RV_OK,TK_NotStart,PK000MD31O,MD301 - Transport/Customes 103-D,,440.016666666667,0,160,0,0,0,160,0,0,0,,,,2007-06-25 08:01,2007-07-23 08:01,,2007-04-09 08:00,2007-05-04 17:00,2007-04-09 08:00,2007-05-04 17:00,2007-04-09 08:00,2007-05-04 17:00,,2007-06-25 08:01,2007-07-23 08:01,,PT_Normal,,,,,/ojNl2zwQa+g5O5qaWSB3A,,,,N,0,0,,,2007-02-01 02:42,2007-02-04 01:00,hbe4678,hbe4678,2007-04-09 08:00,2007-05-04 17:00,160
2315,12458496,14517,6816088,13330,1,100,N,N,N,CP_Units,TT_Task,DT_FixedDUR2,RV_OK,TK_Complete,PK000MD31P,Issue Formal P.O. for  MD301,,,,0,0,0,0,80,0,0,0,,2005-09-30 00:00,2005-10-13 00:00,2007-06-05 08:01,2007-06-05 08:01,,2007-01-27 00:00,2007-01-27 00:00,,,2005-09-26 08:00,2005-10-07 17:00,,,,,PT_Normal,,,,,7BQvlzqwScSqcMwQcVkXDw,,,,N,0,0,,,2007-02-01 02:42,2007-02-04 01:05,hbe4678,hbe4678,,,0
2316,12458497,14517,6816088,13330,1,100,N,N,N,CP_Units,TT_Task,DT_FixedDUR2,RV_OK,TK_Active,PK000MD34K,"MD304 - Fabricate/PO Promise 106-D, 109-DA/B",,1600,0,184,0,0,0,2080,0,0,0,,2005-09-16 00:00,,2007-11-05 08:00,2007-12-05 17:00,2007-02-28 17:00,2007-01-29 08:00,2007-02-28 17:00,2007-01-29 08:00,2007-02-28 17:00,2005-09-12 08:00,2006-09-12 17:00,,2007-11-05 08:00,2007-12-05 17:00,,PT_Normal,,,,,HEiyGINgSPKv4cN1G2ROGw,,,,N,0,0,,,2007-02-01 02:42,2007-02-01 02:43,hbe4678,hbe4678,2007-01-29 08:00,2007-02-28 17:00,184
2317,12458498,14517,6816088,4050,1,0,N,N,N,CP_Units,TT_Task,DT_FixedDUR2,RV_OK,TK_NotStart,PK000MD21O,MD201 - Transport/Customes 101-E,,1048.01666666667,0.0166666666666667,168,0,0,0,240,0,0,0,,,,2007-07-19 08:01,2007-08-09 08:01,,2007-03-10 08:00,2007-03-30 17:00,2007-03-10 08:00,2007-03-30 17:00,2007-03-10 08:00,2007-04-08 17:00,,2007-07-19 08:01,2007-08-09 08:01,,PT_Normal,,,,,n9aNx6c6QV+Y2JS3Gnkj2g,,,,N,0,0,,,2007-02-01 02:42,2007-02-04 01:00,hbe4678,hbe4678,2007-03-10 08:00,2007-03-30 17:00,168
2318,12458499,14517,6816088,13330,1,100,N,N,N,CP_Units,TT_Task,DT_FixedDUR2,RV_OK,TK_Complete,PK000MD44L,MD404 - Fabricate/PO Promise 107-F,,,,0,0,0,0,1120,0,0,0,,2005-09-16 00:00,2006-07-05 00:00,2007-07-02 08:01,2007-07-02 08:01,,2007-01-27 00:00,2007-01-27 00:00,,,2005-10-17 08:00,2006-05-02 17:00,,,,,PT_Normal,,,,,ws6VfJgoS6aOZFQCWXbhvA,lz7JmYx+sEy+0rcHN1eIuR,,,N,0,0,,,2007-02-01 02:42,2007-02-04 01:05,hbe4678,hbe4678,,,0
2319,12458500,14517,6816088,13330,1,100,N,N,N,CP_Units,TT_Task,DT_FixedDUR2,RV_OK,TK_Complete,PK000MD44M,MD404 - Marshaling 107-F,,,,0,0,0,0,320,0,0,0,,2006-07-06 00:00,2006-08-16 00:00,2007-07-02 08:01,2007-07-02 08:01,,2007-01-27 00:00,2007-01-27 00:00,,,2006-07-17 08:00,2006-09-08 17:00,,,,,PT_Normal,,,,,gJCvhEo8S2asZZVI1xoNDA,l+VhdvB5F0CGyDD2Cut2Vx,,,N,0,0,,,2007-02-01 02:42,2007-02-04 01:05,hbe4678,hbe4678,,,0
2320,12458501,14517,6816088,13330,1,100,N,N,N,CP_Units,TT_Task,DT_FixedDUR2,RV_OK,TK_Complete,PK000MD44N,MD404 - Transport/Customes 107-F,,,,0,0,0,0,240,0,0,0,,2006-08-16 00:00,2006-09-14 00:00,2007-07-02 08:01,2007-07-02 08:01,,2007-01-27 00:00,2007-01-27 00:00,,,2006-09-11 08:00,2006-10-20 17:00,,,,,PT_Normal,,,,,7biHtwrAQXiXiFrVZ0a50A,YffDd8QipEOJxl0as2EkdB,,,N,0,0,,,2007-02-01 02:42,2007-02-04 01:05,hbe4678,hbe4678,,,0
2321,12458502,14517,6816088,13330,1,100,N,N,N,CP_Units,TT_Task,DT_FixedDUR2,RV_OK,TK_Complete,PK000MD4Q,MD405 - Fabricate/PO Promise ISBL DRUMS - 118-F,,,,0,0,0,0,1000,0,0,0,,2005-09-16 00:00,2006-07-13 00:00,2007-10-20 08:01,2007-10-20 08:01,,2007-01-27 00:00,2007-01-27 00:00,,,2005-09-12 08:00,2006-03-07 17:00,,,,,PT_Normal,,,,,w1BtALCAT5m9lPiRUVaGVA,iFKZL5dUf0eLCDKTPHBYwR,,,N,0,0,,,2007-02-01 02:42,2007-02-04 01:05,hbe4678,hbe4678,,,0
2322,12458503,14517,6816088,13330,1,100,N,N,N,CP_Units,TT_Task,DT_FixedDUR2,RV_OK,TK_Complete,PK000MD45T,MD405 - Transport/Customes ISBL DRUMS - 118-F,,,,0,0,0,0,240,0,0,0,,2006-08-16 00:00,2006-09-14 00:00,2007-10-20 08:01,2007-10-20 08:01,,2007-01-27 00:00,2007-01-27 00:00,,,2006-08-31 08:00,2006-10-11 17:00,,,,,PT_Normal,,,,,pHCXYZgzQsSrlr0rx53L/w,K7actIruO0OindskMGLJ1B,,,N,0,0,,,2007-02-01 02:42,2007-02-04 01:05,hbe4678,hbe4678,,,0
2323,12458504,14517,6816088,13330,1,100,N,N,N,CP_Units,TT_Task,DT_FixedDUR2,RV_OK,TK_Complete,PK000MDR,MD405 - Marshaling ISBL DRUMS - 118-F,,,,0,0,0,0,320,0,0,0,,2006-07-14 00:00,2006-08-16 00:00,2007-10-20 08:01,2007-10-20 08:01,,2007-01-27 00:00,2007-01-27 00:00,,,2006-08-02 08:00,2006-09-26 17:00,,,,,PT_Normal,,,,,tA0roy+iTG+qNilf+B6Oig,nUe6WQMN8U6qfkZZnY0D0B,,,N,0,0,,,2007-02-01 02:42,2007-02-04 01:05,hbe4678,hbe4678,,,0
2324,12458505,14517,6816088,13330,1,100,N,N,N,CP_Units,TT_Task,DT_FixedDUR2,RV_OK,TK_Complete,PK000MD46T,MD411 - Fabricate/PO Promise OSBL DRUMS - 2006-F,,,,0,0,0,0,1000,0,0,0,,2005-09-16 00:00,2006-08-07 00:00,2007-07-31 08:01,2007-07-31 08:01,,2007-01-27 00:00,2007-01-27 00:00,,,2005-09-12 08:00,2006-03-07 17:00,,,,,PT_Normal,,,,,Vh1ROfnBRZCqlPA1t1w3hA,+S5yRxc0c0mBm1MHsSscuR,,,N,0,0,,,2007-02-01 02:42,2007-02-04 01:05,hbe4678,hbe4678,,,0
2325,12458506,14517,6816088,13330,1,100,N,N,N,CP_Units,TT_Task,DT_FixedDUR2,RV_OK,TK_Complete,PK000MD46V,MD411 - Transport/Customes OSBL DRUMS - 2006-F,,,,0,0,0,0,240,0,0,0,,2006-11-13 08:00,2006-12-08 00:00,2007-07-31 08:01,2007-07-31 08:01,,2007-01-27 00:00,2007-01-27 00:00,,,2006-11-13 08:00,2006-12-22 17:00,,,,,PT_Normal,,,,,w3yw0U4KS6yxGslAPr/RHA,M0IAvWqigk+Lu5T7DSYEQB,,,N,0,0,,,2007-02-01 02:42,2007-02-04 01:05,hbe4678,hbe4678,,,0
2326,12458507,14517,6816088,13330,1,100,N,N,N,CP_Units,TT_Task,DT_FixedDUR2,RV_OK,TK_Complete,PK000MD46U,MD411 - Marshaling OSBL DRUMS - 2006-F,,,,0,0,0,0,320,0,0,0,,2006-08-08 00:00,2006-11-09 00:00,2007-07-31 08:01,2007-07-31 08:01,,2007-01-27 00:00,2007-01-27 00:00,,,2006-08-14 08:00,2006-10-06 17:00,,,,,PT_Normal,,,,,56JIjvhNTLGsLrYs7438SA,ZEK/+a7QDECNcfYP1GopIB,,,N,0,0,,,2007-02-01 02:42,2007-02-04 01:05,hbe4678,hbe4678,,,0
2327,12458508,14517,6816088,13330,1,100,N,N,N,CP_Units,TT_Task,DT_FixedDUR2,RV_OK,TK_Complete,PK000MD22A,MD202 - Fabricate/PO Promise TOWERS 104-E,,,,0,0,0,0,1800,0,0,0,,2005-09-16 00:00,2006-09-29 00:00,2007-10-20 08:01,2007-10-20 08:01,,2007-01-27 00:00,2007-01-27 00:00,,,2005-09-15 08:00,2006-07-28 17:00,,,,,PT_Normal,,,,,PKoWZsxBT/OiYATGNujZ2Q,jiRowUMYyUOUV+KxhQ4gqh,,,N,0,0,,,2007-02-01 02:42,2007-02-04 01:05,hbe4678,hbe4678,,,0
2328,12458509,14517,6816088,13330,1,100,N,N,N,CP_Units,TT_Task,DT_FixedDUR2,RV_OK,TK_Complete,PK000MD22B,MD202 - Marshaling TOWERS 104-E,,,,0,0,0,0,320,0,0,0,,2006-10-02 00:00,2006-11-10 00:00,2007-10-20 08:01,2007-10-20 08:01,,2007-01-27 00:00,2007-01-27 00:00,,,2006-11-01 08:00,2006-12-26 17:00,,,,,PT_Normal,,,,,ZKTjKWynSsyw6fu5ku1WnA,ZWG0bEl7F0iLOgG7+wXobh,,,N,0,0,,,2007-02-01 02:42,2007-02-04 01:05,hbe4678,hbe4678,,,0
2329,12458510,14517,6816088,13330,1,100,N,N,N,CP_Units,TT_Task,DT_FixedDUR2,RV_OK,TK_Complete,PK000MD22C,MD202 - Transport/Customes TOWERS 104-E,,,,0,0,0,0,240,0,0,0,,2006-11-13 08:00,2006-12-08 00:00,2007-10-20 08:01,2007-10-20 08:01,,2007-01-27 00:00,2007-01-27 00:00,,,2006-11-13 08:00,2006-12-22 17:00,,,,,PT_Normal,,,,,ldbUc3uvSJ+CpZtoStu4Vg,amisz5SwTUG3yMFS1VOsJh,,,N,0,0,,,2007-02-01 02:42,2007-02-04 01:05,hbe4678,hbe4678,,,0
2330,12458511,14517,6816088,13330,1,100,N,N,N,CP_Units,TT_Task,DT_FixedDUR2,RV_OK,TK_Complete,ZZ2070,MJ305 - Fabricate/PO Promise OSBL ANSI/API PUMPS,,,,0,0,0,0,1600,0,0,0,,2005-09-23 00:00,2006-12-12 00:00,2007-10-19 17:00,2007-10-19 17:00,,2007-01-27 00:00,2007-01-27 00:00,,,2005-10-17 08:00,2006-07-25 17:00,,,,,PT_Normal,,,,,XFeQOt42QVegbTYJKhf+YA,nNTA4zUcS0mTodq1gAWbpR,,,N,0,0,,,2007-02-01 02:42,2007-02-04 01:05,hbe4678,hbe4678,,,0
2331,12458512,14517,6816088,13330,1,0,N,N,N,CP_Units,TT_Task,DT_FixedDUR2,RV_OK,TK_NotStart,ZZ2080,MJ305 - Transport/Customes OSBL ANSI/API PUMPS,,1520,0,240,0,0,0,240,0,0,0,,,,2007-10-22 08:00,2007-11-30 17:00,,2007-01-29 08:00,2007-03-09 17:00,2007-01-29 08:00,2007-03-09 17:00,2007-01-29 08:00,2007-03-09 17:00,,2007-10-22 08:00,2007-11-30 17:00,,PT_Normal,,,,,V8drDsBcRKa920EpYd3AKA,KegQA+VdBk6W5u4PuDkzcx,,,N,0,0,,,2007-02-01 02:42,2007-02-01 02:43,hbe4678,hbe4678,2007-01-29 08:00,2007-03-09 17:00,240
2332,12458513,14517,6816088,13330,1,0,N,N,N,CP_Units,TT_Task,DT_FixedDUR2,RV_OK,TK_Active,ZZ2090,MJ305 - Marshaling OSBL ANSI/API PUMPS,,1520,0,0,0,0,0,320,0,0,0,,2006-12-13 08:00,,2007-10-19 17:00,2007-10-19 17:00,2007-01-12 17:00,2007-01-29 08:00,2007-01-29 08:00,2007-01-29 08:00,2007-01-29 08:00,2006-12-13 08:00,2007-02-06 17:00,,2007-10-19 17:00,2007-10-19 17:00,,PT_Normal,,,,,fGCxr2InRVO5jBdCO4C69g,+l/Q+l49LUS185sWcoGZ1x,,,N,0,0,,,2007-02-01 02:42,2007-02-01 02:43,hbe4678,hbe4678,2007-01-29 08:00,2007-01-29 08:00,0
2333,12458514,14517,6816088,13330,1,0,N,N,N,CP_Units,TT_Task,DT_FixedDUR2,RV_OK,TK_Active,PK020MC31C,MC312 - Fabricate/PO Promise 121-C,,720.016666666667,0,360,0,0,0,2560,0,0,0,,2005-09-21 00:00,,2007-06-04 08:01,2007-08-06 08:01,2007-03-30 17:00,2007-01-29 08:00,2007-03-30 17:00,2007-01-29 08:00,2007-03-30 17:00,2005-11-14 08:00,2007-02-06 17:00,,2007-06-04 08:01,2007-08-06 08:01,,PT_Normal,,,,,+6Y5LGmoQbeWG28goDQNeg,cOBbQ5JK/UyPfrXvAIAYjh,,,N,0,0,,,2007-02-01 02:42,2007-02-04 01:00,hbe4678,hbe4678,2007-01-29 08:00,2007-03-30 17:00,360
2334,12458515,14517,6816088,13330,1,0,N,N,N,CP_Units,TT_Task,DT_FixedDUR2,RV_OK,TK_NotStart,PK020MC31J,MC312 - Transport/Customes 121-C,,720.016666666667,0,160,0,0,0,160,0,0,0,,,,2007-08-13 08:01,2007-09-10 08:01,,2007-04-09 08:00,2007-05-04 17:00,2007-04-09 08:00,2007-05-04 17:00,2007-04-09 08:00,2007-05-04 17:00,,2007-08-13 08:01,2007-09-10 08:01,,PT_Normal,,,,,Ca5i8hhoQi+8RJr/jwpppg,2HnDzM3Ul0WJso9LEEDInh,,,N,0,0,,,2007-02-01 02:42,2007-02-04 01:00,hbe4678,hbe4678,2007-04-09 08:00,2007-05-04 17:00,160
2335,12458516,14517,6816088,13330,1,0,N,N,N,CP_Units,TT_Task,DT_FixedDUR2,RV_OK,TK_NotStart,PK020MC31D,MC312 - Marshaling 121-C,,720.016666666667,0,40,0,0,0,480,0,0,0,2007-02-19 00:00,,,2007-08-06 08:01,2007-08-13 08:01,,2007-04-02 08:00,2007-04-06 17:00,2007-04-02 08:00,2007-04-06 17:00,2007-04-02 08:00,2007-06-22 17:00,,2007-08-06 08:01,2007-08-13 08:01,CS_MSOA,PT_Normal,,,,,jfYYVu/8QBGu4lZMMmgWow,13p9TSzhLUqgf1yQhBYZ1B,,,N,0,0,,,2007-02-01 02:42,2007-02-04 01:00,hbe4678,hbe4678,2007-04-02 08:00,2007-04-06 17:00,40
2336,12458517,14517,6816088,13330,1,100,N,N,N,CP_Units,TT_Task,DT_FixedDUR2,RV_OK,TK_Complete,PK0003526,SIS - Integrated FAT,,,,0,0,0,0,80,0,0,0,2006-12-04 00:00,2006-12-04 08:00,2006-12-08 17:00,2007-04-16 08:00,2007-04-16 08:00,,2007-01-27 00:00,2007-01-27 00:00,,,2006-12-04 08:00,2006-12-15 17:00,,,,CS_MSOA,PT_Normal,,,,,F2wCXIQ3QGqTDfgZPW/jHQ,jx9+YRgV1UKEVNadVVWuVg,,,N,0,0,,,2007-02-01 02:42,2007-02-04 01:05,hbe4678,hbe4678,,,0
2337,12458518,14517,6816088,13330,1,100,N,N,N,CP_Units,TT_Task,DT_FixedDUR2,RV_OK,TK_Complete,PK000I354P,ITCC - Ship to DCS Shop/ Setup,,,,0,0,0,0,80,0,0,0,,2006-11-27 08:00,2006-11-27 17:00,2007-04-16 08:00,2007-04-16 08:00,,2007-01-27 00:00,2007-01-27 00:00,,,2006-11-27 08:00,2006-12-08 17:00,,,,,PT_Normal,,,,,bPcILTOUQiWgeFMbi4v1kw,HES2gflte0GJmbVV9ONnQB,,,N,0,0,,,2007-02-01 02:42,2007-02-04 01:05,hbe4678,hbe4678,,,0
2338,12458519,14517,6816088,13330,1,100,N,N,N,CP_Units,TT_Task,DT_FixedDUR2,RV_OK,TK_Complete,PK000I354Q,ITCC - Integrated FAT,,,,0,0,0,0,80,0,0,0,2006-12-04 00:00,2006-12-04 08:00,2006-12-08 17:00,2007-04-16 08:00,2007-04-16 08:00,,2007-01-27 00:00,2007-01-27 00:00,,,2006-12-04 08:00,2006-12-15 17:00,,,,CS_MSOA,PT_Normal,,,,,mwjSd6zJTpyjjPd9687EZw,HES2gflte0GJmbVV9ONnQB,,,N,0,0,,,2007-02-01 02:42,2007-02-04 01:05,hbe4678,hbe4678,,,0
2339,12458520,14517,6816088,13330,1,100,N,N,N,CP_Units,TT_Task,DT_FixedDUR2,RV_OK,TK_Complete,PK000I444D,Vendor Update Pricing - Shelters/ Analyzers,,,,0,0,0,0,40,0,0,0,,2006-05-15 08:00,2006-06-05 17:00,2007-09-11 08:01,2007-09-11 08:01,,2007-01-27 00:00,2007-01-27 00:00,,,2006-05-15 08:00,2006-05-19 17:00,,,,,PT_Normal,,,,,IgZbzo/HTNaPOIHKYPX9FQ,US1HbGyFfk60JDH0TARbEh,,,N,0,0,,,2007-02-01 02:42,2007-02-04 01:05,hbe4678,hbe4678,,,0
2340,12458521,14517,6816088,13329,0,0,N,N,N,CP_Units,TT_FinMile,DT_FixedDUR2,RV_OK,TK_NotStart,PK000E004L,UPS System - Receive at Site,,264.016666666667,0,0,0,0,0,0,0,0,0,,,,2007-07-23 08:01,2007-07-23 08:01,,2007-06-13 17:00,2007-06-13 17:00,2007-06-13 17:00,2007-06-13 17:00,2007-06-13 17:00,2007-06-13 17:00,,2007-07-23 08:01,2007-07-23 08:01,,PT_Normal,,,,,rbCHP110SRG4YY6ZeP7zjQ,7PxYito0t0aeRu5OLWXIqQ,,,N,0,0,,,2007-02-01 02:42,2007-02-04 01:00,hbe4678,hbe4678,2007-06-13 17:00,2007-06-13 17:00,0
2341,12458522,14517,6816088,13330,1,100,N,N,N,CP_Units,TT_Task,DT_FixedDUR2,RV_OK,TK_Complete,PK000E004B,UPS System - Inquiry REQ/RFQ,,,,0,0,0,0,160,0,0,0,,2006-04-27 00:00,2006-05-08 17:00,2007-03-07 08:01,2007-03-07 08:01,,2007-01-27 00:00,2007-01-27 00:00,,,2006-05-01 08:00,2006-05-26 17:00,,,,,PT_Normal,,,,,tf55xBBUSZCdHUIq/Tp6pw,Ig61VWhQZkiSJ6AkcZOa7A,,,N,0,0,,,2007-02-01 02:42,2007-02-04 01:05,hbe4678,hbe4678,,,0
2342,12458523,14517,6816088,13330,1,100,N,N,N,CP_Units,TT_Task,DT_FixedDUR2,RV_OK,TK_Complete,PK000E00C,UPS System - Receive Bids,,,,0,0,0,0,80,0,0,0,,2006-05-08 00:00,2006-06-09 00:00,2007-03-07 08:01,2007-03-07 08:01,,2007-01-27 00:00,2007-01-27 00:00,,,2006-05-01 08:00,2006-05-12 17:00,,,,,PT_Normal,,,,,y7gPZBgJSPuokqUIPt7JdA,+O4Qd57OwU+h5iuj7q1uPg,,,N,0,0,,,2007-02-01 02:42,2007-02-04 01:05,hbe4678,hbe4678,,,0
2343,12458524,14517,6816088,13330,1,100,N,N,N,CP_Units,TT_Task,DT_FixedDUR2,RV_OK,TK_Complete,PK000E004E,UPS System - Eval Bids/Issue Recmd,,,,0,0,0,0,120,0,0,0,,2006-07-31 00:00,2006-08-07 00:00,2007-03-07 08:01,2007-03-07 08:01,,2007-01-27 00:00,2007-01-27 00:00,,,2006-07-17 08:00,2006-08-04 17:00,,,,,PT_Normal,,,,,odT7BbbgSz+Ot/WfbRJTMw,xVnKIxSgBEGwhhrqJxHwbw,,,N,0,0,,,2007-02-01 02:42,2007-02-04 01:05,hbe4678,hbe4678,,,0
2344,12458525,14517,6816088,13330,1,100,N,N,N,CP_Units,TT_Task,DT_FixedDUR2,RV_OK,TK_Complete,PK000E004G,UPS System - Interim Award,,,,0,0,0,0,40,0,0,0,,2006-08-07 00:00,2006-08-17 00:00,2007-03-07 08:01,2007-03-07 08:01,,2007-01-27 00:00,2007-01-27 00:00,,,2006-07-31 08:00,2006-08-04 17:00,,,,,PT_Normal,,,,,ggnJTIMlRRqFcIjEENdHMQ,ym1XNOJIQkGcLtaKRAR8HQ,,,N,0,0,,,2007-02-01 02:42,2007-02-04 01:05,hbe4678,hbe4678,,,0
2345,12458526,14517,6816088,13330,1,0,N,N,N,CP_Units,TT_Task,DT_FixedDUR2,RV_OK,TK_Active,PK000E004H,UPS System - Fab / Exworks,,216.016666666667,0,224,0,0,0,1200,0,0,0,,2006-08-17 00:00,,2007-03-07 08:01,2007-04-16 08:01,2007-03-07 17:00,2007-01-29 08:00,2007-03-07 17:00,2007-01-29 08:00,2007-03-07 17:00,2006-08-10 08:00,2007-03-07 17:00,,2007-03-07 08:01,2007-04-16 08:01,,PT_Normal,,,,,32z+VK8iS4K7VZ9bXjz5Sg,GbBuFC/SY02Jt75haSh+eQ,,,N,0,0,,,2007-02-01 02:42,2007-02-04 01:00,hbe4678,hbe4678,2007-01-29 08:00,2007-03-07 17:00,224
2346,12458527,14517,6816088,13330,1,100,N,N,N,CP_Units,TT_Task,DT_FixedDUR2,RV_OK,TK_Complete,PK000E004K,UPS System - Formal Award,,,,0,0,0,0,80,0,0,0,,2006-08-17 00:00,2006-08-17 00:00,2007-04-16 08:01,2007-04-16 08:01,,2007-01-27 00:00,2007-01-27 00:00,,,2006-08-10 08:00,2006-08-23 17:00,,,,,PT_Normal,,,,,NCIJVc0aTAW217dAqfl3MQ,pbkWPGgUQkOdjPMjh6dKDw,,,N,0,0,,,2007-02-01 02:42,2007-02-04 01:05,hbe4678,hbe4678,,,0
2347,12458528,14517,6816088,13330,1,0,N,N,N,CP_Units,TT_Task,DT_FixedDUR2,RV_OK,TK_NotStart,PK000E004N,UPS System - Transport,,216.016666666667,0,240,0,0,0,240,0,0,0,,,,2007-06-11 08:01,2007-07-23 08:01,,2007-05-03 08:00,2007-06-13 17:00,2007-05-03 08:00,2007-06-13 17:00,2007-05-03 08:00,2007-06-13 17:00,,2007-06-11 08:01,2007-07-23 08:01,,PT_Normal,,,,,G8J91BVXRFqvYdfio4v0jw,bFvIbj9+YUqhjZh0BlLEOQ,,,N,0,0,,,2007-02-01 02:42,2007-02-04 01:00,hbe4678,hbe4678,2007-05-03 08:00,2007-06-13 17:00,240
2348,12458529,14517,6816088,13330,1,0,N,N,N,CP_Units,TT_Task,DT_FixedDUR2,RV_OK,TK_NotStart,PK000E004X,UPS System - Marshalling,,216.016666666667,0,320,0,0,0,320,0,0,0,,,,2007-04-16 08:01,2007-06-11 08:01,,2007-03-08 08:00,2007-05-02 17:00,2007-03-08 08:00,2007-05-02 17:00,2007-03-08 08:00,2007-05-02 17:00,,2007-04-16 08:01,2007-06-11 08:01,,PT_Normal,,,,,EtUely9LSsORZpcQ7lNB/w,U4qoIPSgKUG4P8j/4PNMWA,,,N,0,0,,,2007-02-01 02:42,2007-02-04 01:00,hbe4678,hbe4678,2007-03-08 08:00,2007-05-02 17:00,320
2349,12458530,14517,6816088,13330,1,100,N,N,N,CP_Units,TT_Task,DT_FixedDUR2,RV_OK,TK_Complete,PK000MU61T,MU611 - Fabricate/PO Promise 2101-UJA Thru UJGM CW Motors,,,,0,0,0,0,1120,0,0,0,,2005-10-10 00:00,2006-05-15 00:00,2007-04-08 08:01,2007-04-08 08:01,,2007-01-27 00:00,2007-01-27 00:00,,,2005-10-17 08:00,2006-05-02 17:00,,,,,PT_Normal,,,,,vyj2pb8NT6a6UbeH7jiuqA,F/lgLlicF0aAzyGzl9IgyB,,,N,0,0,,,2007-02-01 02:42,2007-02-04 01:05,hbe4678,hbe4678,,,0
2350,12458531,14517,6816088,13330,1,100,N,N,N,CP_Units,TT_Task,DT_FixedDUR2,RV_OK,TK_Complete,ZZ1040,MU611 - Transport/Customes 2101-UJA Thru UJGM CW Motors,,,,0,0,0,0,240,0,0,0,,2006-05-29 00:00,2006-07-14 00:00,2007-04-08 08:01,2007-04-08 08:01,,2007-01-27 00:00,2007-01-27 00:00,,,2006-07-17 08:00,2006-08-25 17:00,,,,,PT_Normal,,,,,MT1xlHkeSuS7n5qz5jPgYA,/9migtdYNUaBLQSngxhceh,,,N,0,0,,,2007-02-01 02:42,2007-02-04 01:05,hbe4678,hbe4678,,,0
2351,12458532,14517,6816088,13330,1,100,N,N,N,CP_Units,TT_Task,DT_FixedDUR2,RV_OK,TK_Complete,PK000MU61U,MU611 - Marshaling 2101-UJA Thru UJGM CW Motors,,,,0,0,0,0,320,0,0,0,,2006-05-16 00:00,2006-05-26 00:00,2007-04-08 08:01,2007-04-08 08:01,,2007-01-27 00:00,2007-01-27 00:00,,,2006-06-19 08:00,2006-08-11 17:00,,,,,PT_Normal,,,,,jCAHi/SARveSo6oHIE0bhg,Q/MXNknDTUaKtsqiJYaxDh,,,N,0,0,,,2007-02-01 02:42,2007-02-04 01:05,hbe4678,hbe4678,,,0
2352,12458533,14517,6816088,13330,1,100,N,N,N,CP_Units,TT_Task,DT_FixedDUR2,RV_OK,TK_Complete,PK000MB61L,Marshaling of 101-B Burners MB610,,,,0,0,0,0,320,0,0,0,,2006-05-02 08:00,2006-08-16 00:00,2007-09-19 08:01,2007-09-19 08:01,,2007-01-27 00:00,2007-01-27 00:00,,,2005-10-17 08:00,2005-12-09 17:00,,,,,PT_Normal,,,,,SiOMZZ8RSBOCUPuI1gR5pQ,0pSxlPyu20K2vTpKuEbHwB,,,N,0,0,,,2007-02-01 02:42,2007-02-04 01:05,hbe4678,hbe4678,,,0
2353,12458534,14517,6816088,13330,1,100,N,N,N,CP_Units,TT_Task,DT_FixedDUR2,RV_OK,TK_Complete,PK000MB21F,Marshaling of Equip. 101-B Siding for MB212,,,,0,0,0,0,320,0,0,0,,2006-04-04 00:00,2006-08-16 00:00,2007-12-17 08:01,2007-12-17 08:01,,2007-01-27 00:00,2007-01-27 00:00,,,2006-05-15 08:00,2006-07-07 17:00,,,,,PT_Normal,,,,,oXF+Ddk8Q/ilFpf0N0uaQA,gH/UIaMXcEq/UUdvJqMvbx,,,N,0,0,,,2007-02-01 02:42,2007-02-04 01:05,hbe4678,hbe4678,,,0
2354,12458535,14517,6816088,13330,1,100,N,N,N,CP_Units,TT_Task,DT_FixedDUR2,RV_OK,TK_Complete,PK000MC61L,MC610 - Fabricate/PO Promise DBL PIPE EXCH 161-C,,,,0,0,0,0,1360,0,0,0,,2005-10-11 00:00,2006-05-09 17:00,2007-10-20 08:01,2007-10-20 08:01,,2007-01-27 00:00,2007-01-27 00:00,,,2005-10-27 08:00,2006-06-23 17:00,,,,,PT_Normal,,,,,YnMUkYlcRVePtVs2WP5J/w,qL8f5rqwiEudtC3RXBXx+B,,,N,0,0,,,2007-02-01 02:42,2007-02-04 01:05,hbe4678,hbe4678,,,0
2355,12458536,14517,6816088,13330,1,100,N,N,N,CP_Units,TT_Task,DT_FixedDUR2,RV_OK,TK_Complete,PK000MC61Q,MC610 - Transport/Customes DBL PIPE EXCH 161-C,,,,0,0,0,0,240,0,0,0,,2006-08-16 00:00,2006-09-14 00:00,2008-01-17 08:01,2008-01-17 08:01,,2007-01-27 00:00,2007-01-27 00:00,,,2006-08-21 08:00,2006-09-29 17:00,,,,,PT_Normal,,,,,nSN0lCpJSRGQJWud7EZ0TA,o6XsOvJAHUi58+CcSGuZsx,,,N,0,0,,,2007-02-01 02:42,2007-02-04 01:05,hbe4678,hbe4678,,,0
2356,12458537,14517,6816088,13330,1,100,N,N,N,CP_Units,TT_Task,DT_FixedDUR2,RV_OK,TK_Complete,PK000MC61F,MC610 - Marshaling DBL PIPE EXCH 161-C,,,,0,0,0,0,320,0,0,0,,2006-05-10 08:00,2006-08-16 00:00,2008-01-17 08:01,2008-01-17 08:01,,2007-01-27 00:00,2007-01-27 00:00,,,2006-05-10 08:00,2006-07-04 17:00,,,,,PT_Normal,,,,,1eOEZ/ZCRkSlvR2Ajtm0GQ,ROmDwymoSUCkvFiTzWA7nh,,,N,0,0,,,2007-02-01 02:42,2007-02-04 01:05,hbe4678,hbe4678,,,0
2357,12458538,14517,6816088,4047,1,100,N,N,N,CP_Drtn,TT_Task,DT_FixedDUR2,RV_OK,TK_Complete,PK000MU32I,01D MU322 Eval Bids & Issue Recmd,,,,0,0,0,0,40,0,0,0,,2006-01-23 00:00,2006-05-01 17:00,2007-04-08 08:01,2007-04-08 08:01,,2007-01-27 00:00,2007-01-27 00:00,,,2006-03-06 08:00,2006-03-10 17:00,,,,,PT_Normal,,,,,wjQbbz/kTv+YkEia7Cu9Dw,,,,N,0,0,,,2007-02-01 02:42,2007-02-04 01:05,hbe4678,hbe4678,,,0
2358,12458539,14517,6816088,13330,1,0,N,N,N,CP_Units,TT_Task,DT_FixedDUR2,RV_OK,TK_NotStart,PK000E002X,Transformer - Marshalling,,224.016666666667,0,320,0,0,0,320,0,0,0,,,,2007-04-16 08:01,2007-06-11 08:01,,2007-03-07 08:00,2007-05-01 17:00,2007-03-07 08:00,2007-05-01 17:00,2007-03-07 08:00,2007-05-01 17:00,,2007-04-16 08:01,2007-06-11 08:01,,PT_Normal,,,,,cgAfTOcuQX6KTODmkkPxHg,a2rY79KTmEezqA9gI5xRIg,,,N,0,0,,,2007-02-01 02:42,2007-02-04 01:00,hbe4678,hbe4678,2007-03-07 08:00,2007-05-01 17:00,320
2359,12458540,14517,6816088,13330,1,100,N,N,N,CP_Units,TT_Task,DT_FixedDUR2,RV_OK,TK_Complete,PK010E008B,540-SB Admin. Area Pwr Supply - Inquiry REQ/RFQ,,,,0,0,0,0,160,0,0,0,,2006-03-20 00:00,2006-03-23 00:00,2007-05-07 08:01,2007-05-07 08:01,,2007-01-27 00:00,2007-01-27 00:00,,,2006-05-01 08:00,2006-05-26 17:00,,,,,PT_Normal,,,,,nuDkK+4QT1uMQCiJrlBY6Q,8cYpAQZimUOXdhLndIndzA,,,N,0,0,,,2007-02-01 02:42,2007-02-04 01:05,hbe4678,hbe4678,,,0
2360,12458541,14517,6816088,13330,1,100,N,N,N,CP_Units,TT_Task,DT_FixedDUR2,RV_OK,TK_Complete,PK010E008C,540-SB Admin. Area Pwr Supply - Receive Bids,,,,0,0,0,0,80,0,0,0,,2006-03-23 00:00,2006-05-04 00:00,2007-05-07 08:01,2007-05-07 08:01,,2007-01-27 00:00,2007-01-27 00:00,,,2006-05-01 08:00,2006-05-12 17:00,,,,,PT_Normal,,,,,KMNtr2i3RMugSCXNh0qjyw,dsE888ZG8kOgFPP1bILcvw,,,N,0,0,,,2007-02-01 02:42,2007-02-04 01:05,hbe4678,hbe4678,,,0
2361,12458542,14517,6816088,13330,1,100,N,N,N,CP_Units,TT_Task,DT_FixedDUR2,RV_OK,TK_Complete,PK010E008F,540-SG Admin. Area Pwr Supply - Eval Bids/Issue Recmd,,,,0,0,0,0,120,0,0,0,,2006-05-29 08:00,2006-10-18 00:00,2007-05-07 08:01,2007-05-07 08:01,,2007-01-27 00:00,2007-01-27 00:00,,,2006-05-29 08:00,2006-06-16 17:00,,,,,PT_Normal,2006-09-25 00:00,2006-10-14 00:00,,,gOKYOOrSSyq07xCNvwq5IA,ps8PPllE00KkmuJA2QZkoA,,,N,0,0,,,2007-02-01 02:42,2007-02-04 01:05,hbe4678,hbe4678,,,0
2362,12458543,14517,6816088,13330,1,100,N,N,N,CP_Units,TT_Task,DT_FixedDUR2,RV_OK,TK_Complete,PK010E008G,540-SG Admin. Area Pwr Supply - Interim Award,,,,0,0,0,0,40,0,0,0,,2006-10-19 08:00,2006-10-25 17:00,2007-05-07 08:01,2007-05-07 08:01,,2007-01-27 00:00,2007-01-27 00:00,,,2006-10-19 08:00,2006-10-25 17:00,,,,,PT_Normal,,,,,lmSLhYE3SsK9xu9kD0Cs9w,gmQrMMzjc0WTfUmpAb5V3Q,,,N,0,0,,,2007-02-01 02:42,2007-02-04 01:05,hbe4678,hbe4678,,,0
2363,12458544,14517,6816088,13330,1,0,N,N,N,CP_Units,TT_Task,DT_FixedDUR2,RV_OK,TK_Active,PK010E008K,540-SG Admin. Area Pwr Supply - Fab / Exworks,,560.016666666667,0,256,0,0,0,800,0,0,0,,2006-10-26 08:00,,2007-05-07 08:01,2007-06-20 08:01,2007-03-13 17:00,2007-01-29 08:00,2007-03-13 17:00,2007-01-29 08:00,2007-03-13 17:00,2006-10-26 08:00,2007-03-14 17:00,,2007-05-07 08:01,2007-06-20 08:01,,PT_Normal,,,,,C8zFi04gTXiBgJxv4QUMhw,FInFfwdGE0eXLZ/BcBTNPg,,,N,0,0,,,2007-02-01 02:42,2007-02-04 01:00,hbe4678,hbe4678,2007-01-29 08:00,2007-03-13 17:00,256
2364,12458545,14517,6816088,13330,1,100,N,N,N,CP_Units,TT_Task,DT_FixedDUR2,RV_OK,TK_Complete,PK010E008H,540-SG Admin. Area Pwr Supply - Formal Award,,,,0,0,0,0,80,0,0,0,,2006-10-25 00:00,2006-10-25 00:00,2007-06-20 08:01,2007-06-20 08:01,,2007-01-27 00:00,2007-01-27 00:00,,,2007-01-29 08:01,2007-02-12 08:01,,,,,PT_Normal,,,,,q//1lQylQEm1/pj2L2V6Hw,L+YMZhYbf0qYJmUwdyqfmw,,,N,0,0,,,2007-02-01 02:42,2007-02-04 01:05,hbe4678,hbe4678,,,0
2365,12458546,14517,6816088,13330,1,0,N,N,N,CP_Units,TT_Task,DT_FixedDUR2,RV_OK,TK_NotStart,PK010E008M,540-SG Admin. Area Pwr Supply - Marshalling,,560.016666666667,0,320,0,0,0,320,0,0,0,,,,2007-06-20 08:01,2007-08-15 08:01,,2007-03-14 08:00,2007-05-08 17:00,2007-03-14 08:00,2007-05-08 17:00,2007-03-14 08:00,2007-05-08 17:00,,2007-06-20 08:01,2007-08-15 08:01,,PT_Normal,,,,,kUhX34iwSm665KtFiNLIdw,AebgRaiKe0+nkhU2L+nO7g,,,N,0,0,,,2007-02-01 02:42,2007-02-04 01:00,hbe4678,hbe4678,2007-03-14 08:00,2007-05-08 17:00,320
2366,12458547,14517,6816088,13329,0,0,N,N,N,CP_Units,TT_FinMile,DT_FixedDUR2,RV_OK,TK_NotStart,PK010E008P,540-SG Admin. Area Pwr Supply - Receive at Site,,624.016666666667,360,0,0,0,0,0,0,0,0,,,,2007-09-26 08:01,2007-09-26 08:01,,2007-06-19 17:00,2007-06-19 17:00,2007-06-19 17:00,2007-06-19 17:00,2007-06-19 17:00,2007-06-19 17:00,,2007-09-26 08:01,2007-09-26 08:01,,PT_Normal,,,,,TyeuKjsGQamyNZnrXCKQmg,NOTz0xm10UKtFxWxlg4yMR,,,N,0,0,,,2007-02-01 02:42,2007-02-04 01:00,hbe4678,hbe4678,2007-06-19 17:00,2007-06-19 17:00,0
2367,12458548,14517,6816088,13330,1,0,N,N,N,CP_Units,TT_Task,DT_FixedDUR2,RV_OK,TK_NotStart,PK010E008N,540-SG Admin. Area Pwr Supply - Transport,,560.016666666667,0,240,0,0,0,240,0,0,0,,,,2007-08-15 08:01,2007-09-26 08:01,,2007-05-09 08:00,2007-06-19 17:00,2007-05-09 08:00,2007-06-19 17:00,2007-05-09 08:00,2007-06-19 17:00,,2007-08-15 08:01,2007-09-26 08:01,,PT_Normal,,,,,vvdHI74pSKaaRdt8+s9uNw,lSpGegQDMkCTqE4l5vf2aR,,,N,0,0,,,2007-02-01 02:42,2007-02-04 01:00,hbe4678,hbe4678,2007-05-09 08:00,2007-06-19 17:00,240
2368,12458549,14517,6816088,13330,1,100,N,N,N,CP_Units,TT_Task,DT_FixedDUR2,RV_OK,TK_Complete,PK000MJ71H,Receive Quotes MJ731,,,,0,0,0,0,160,0,0,0,,2006-04-10 08:00,2006-05-05 17:00,2007-02-07 08:01,2007-02-07 08:01,,2007-01-27 00:00,2007-01-27 00:00,,,2006-04-10 08:00,2006-05-05 17:00,,,,,PT_Normal,,,,,JdfJ/TmpSIilwMZ9bEnmAQ,LFGlm4QjB0idhWeyWAzOjx,,,N,0,0,,,2007-02-01 02:42,2007-02-04 01:05,hbe4678,hbe4678,,,0
2369,12458550,14517,6816088,13330,1,100,N,N,N,CP_Units,TT_Task,DT_FixedDUR2,RV_OK,TK_Complete,PK000MJ71I,Eval Bids & Issue Recmd MJ731,,,,0,0,0,0,120,0,0,0,,2006-06-05 00:00,2006-06-26 00:00,2007-02-07 08:01,2007-02-07 08:01,,2007-01-27 00:00,2007-01-27 00:00,,,2006-06-19 08:00,2006-07-07 17:00,,,,,PT_Normal,,,,,GVgnX15WTIqbJ7NgksvPWQ,Kc8lfD9eV0y3ubzuYdfU8B,,,N,0,0,,,2007-02-01 02:42,2007-02-04 01:05,hbe4678,hbe4678,,,0
2370,12458551,14517,6816088,13330,1,100,N,N,N,CP_Units,TT_Task,DT_FixedDUR2,RV_OK,TK_Complete,PK000ML52G,Issue ML501 RFQ,,,,0,0,0,,24,,0,0,,2006-01-09 00:00,2006-01-31 00:00,2007-02-07 08:01,2007-02-07 08:01,,2007-01-27 00:00,2007-01-27 00:00,,,2006-03-28 08:00,2006-03-30 17:00,,,,,PT_Normal,,,,,J4v/fPuTRPC4iroG3YKcJA,lVv1D/8F5k2MnNMtUiHVhB,,,N,0,0,,,2007-02-01 02:42,2007-02-04 01:05,hbe4678,hbe4678,,,0
2371,12458552,14517,6816088,13330,1,100,N,N,N,CP_Units,TT_Task,DT_FixedDUR2,RV_OK,TK_Complete,PK000ML52I,Eval Bids & Issue Recmd ML501,,,,0,0,0,0,40,0,0,0,,2006-02-06 00:00,2006-03-03 17:00,2007-02-07 08:01,2007-02-07 08:01,,2007-01-27 00:00,2007-01-27 00:00,,,2006-02-27 08:00,2006-03-03 17:00,,,,,PT_Normal,,,,,9uHdBKgGTKSYkaGHwJ//bw,YlOsRiMojUugZGMOFKwbCx,,,N,0,0,,,2007-02-01 02:42,2007-02-04 01:05,hbe4678,hbe4678,,,0
2372,12458553,14517,6816088,13330,1,100,N,N,N,CP_Units,TT_Task,DT_FixedDUR2,RV_OK,TK_Complete,PK000ML52P,Issue Formal P.O. for  ML501,,,,0,0,0,0,24,0,0,0,,2006-03-06 00:00,2006-04-26 00:00,2007-03-05 08:00,2007-03-05 08:00,,2007-01-27 00:00,2007-01-27 00:00,,,2006-04-20 16:59,2006-04-25 16:59,,,,,PT_Normal,,,,,QBIm+3cpRdyekKZ3z+noDQ,MhaqbeZ3FEyZwjG6CToj5x,,,N,0,0,,,2007-02-01 02:42,2007-02-04 01:05,hbe4678,hbe4678,,,0
2373,12458554,14517,6816088,13330,1,100,N,N,N,CP_Units,TT_Task,DT_FixedDUR2,RV_OK,TK_Complete,PK000ML52J,Final Negotiate/Interim Award - ML501,,,,0,0,0,0,80,0,0,0,,2006-02-16 00:00,2006-03-03 00:00,2007-02-07 08:01,2007-02-07 08:01,,2007-01-27 00:00,2007-01-27 00:00,,,2006-03-31 08:00,2006-04-13 17:00,,,,,PT_Normal,,,,,EKGlMTgAR6iz3+MSstp+SQ,YIiCBbNBKEiyOb8Z4BS2Sh,,,N,0,0,,,2007-02-01 02:42,2007-02-04 01:05,hbe4678,hbe4678,,,0
2374,12458555,14517,6816088,13330,1,100,N,N,N,CP_Units,TT_Task,DT_FixedDUR2,RV_OK,TK_Complete,PK0003525,SIS - Ship to DCS Shop/ Setup,,,,0,0,0,0,80,0,0,0,,2006-11-23 08:00,2006-11-23 17:00,2007-04-16 08:00,2007-04-16 08:00,,2007-01-27 00:00,2007-01-27 00:00,,,2006-11-23 08:00,2006-12-06 17:00,,,,,PT_Normal,,,,,g37hHmQDSl6A2vf3YwR6XQ,FEE/HPuZz0+S/swu85nihx,,,N,0,0,,,2007-02-01 02:42,2007-02-04 01:05,hbe4678,hbe4678,,,0
2375,12458556,14517,6816088,13330,1,0,N,N,N,CP_Units,TT_Task,DT_FixedDUR2,RV_OK,TK_NotStart,PK000MJ38W,MJ308 - Transport/Customes ISBL ANSI/API PUMP,,1584.01666666667,0,240,0,0,0,240,0,0,0,,,,2007-12-06 08:01,2008-01-17 08:01,,2007-03-05 08:00,2007-04-13 17:00,2007-03-05 08:00,2007-04-13 17:00,2007-03-05 08:00,2007-04-13 17:00,,2007-12-06 08:01,2008-01-17 08:01,,PT_Normal,,,,,anM/fnpoQrikwGY/F8+7YQ,8KRv2TqArUeAUsUFTrEhpR,,,N,0,0,,,2007-02-01 02:42,2007-02-04 01:00,hbe4678,hbe4678,2007-03-05 08:00,2007-04-13 17:00,240
2376,12458557,14517,6816088,13330,1,100,N,N,N,CP_Units,TT_Task,DT_FixedDUR2,RV_OK,TK_Complete,PK000MJ38R,Issue Formal P.O. for  MJ308,,,,0,0,0,0,80,0,0,0,,2006-05-24 00:00,2006-07-07 17:00,2007-11-15 08:01,2007-11-15 08:01,,2007-01-27 00:00,2007-01-27 00:00,,,2006-05-22 08:00,2006-06-02 17:00,,,,,PT_Normal,,,,,ZXMBU9k9T8KX9wrq2Sh3Mw,BmdHoCvuo0WP8mbnROsl1h,,,N,0,0,,,2007-02-01 02:42,2007-02-04 01:05,hbe4678,hbe4678,,,0
2377,12458558,14517,6816088,13330,1,0,N,N,N,CP_Units,TT_Task,DT_FixedDUR2,RV_OK,TK_NotStart,PK000MJ38V,MJ308 - Marshaling ISBL ANSI/API PUMPS,,1584.01666666667,0,120,0,0,0,320,0,0,0,,,,2007-11-15 08:01,2007-12-06 08:01,,2007-02-12 08:00,2007-03-02 17:00,2007-02-12 08:00,2007-03-02 17:00,2007-02-12 08:00,2007-04-06 17:00,,2007-11-15 08:01,2007-12-06 08:01,,PT_Normal,,,,,0HXCVJauSRqsB4D2LQzHcQ,ZEtT0E6qFkyvc71HvcDmwR,,,N,0,0,,,2007-02-01 02:42,2007-02-04 01:00,hbe4678,hbe4678,2007-02-12 08:00,2007-03-02 17:00,120
2378,12458559,14517,6816088,4050,1,0,N,N,N,CP_Drtn,TT_Task,DT_FixedDUR2,RV_OK,TK_NotStart,PK000MU225,02G MU225 Transport/Customes LIFT STATION,,2416.01666666667,0,168,0,0,0,240,0,0,0,,,,2008-01-06 08:01,2008-01-27 08:01,,2007-03-10 08:00,2007-03-30 17:00,2007-03-10 08:00,2007-03-30 17:00,2007-03-10 08:00,2007-04-08 17:00,,2008-01-06 08:01,2008-01-27 08:01,,PT_Normal,,,,,bQyEc5ODR96bnzLuOJtTkw,,,,N,0,0,,,2007-02-01 02:42,2007-02-04 01:00,hbe4678,hbe4678,2007-03-10 08:00,2007-03-30 17:00,168
2379,12458560,14517,6816088,4047,1,0,N,N,N,CP_Drtn,TT_Task,DT_FixedDUR2,RV_OK,TK_Active,PK000MU25S,02G MU225 - Marshaling LIFT STATION,,1720,0,240,0,0,0,320,0,0,0,,2006-12-01 08:00,,2007-11-26 08:00,2008-01-04 17:00,2007-03-09 17:00,2007-01-29 08:00,2007-03-09 17:00,2007-01-29 08:00,2007-03-09 17:00,2006-12-01 08:00,2007-01-25 17:00,,2007-11-26 08:00,2008-01-04 17:00,,PT_Normal,,,,,MmQHQhZLTgGOCe+MFp3eWg,,,,N,0,0,,,2007-02-01 02:42,2007-02-01 02:42,hbe4678,hbe4678,2007-01-29 08:00,2007-03-09 17:00,240
2380,12458561,14517,6816088,4047,1,100,N,N,N,CP_Drtn,TT_Task,DT_FixedDUR2,RV_OK,TK_Complete,PK000MU25K,MU225 - 02G Fabricate/PO Promise LIFT STATION,,,,0,0,0,0,640,0,0,0,,2006-05-26 00:00,2006-11-30 00:00,2007-11-26 08:00,2007-11-26 08:00,,2007-01-27 00:00,2007-01-27 00:00,,,2006-06-13 08:00,2006-10-02 17:00,,,,,PT_Normal,,,,,u4M+X/2uTwO/s4lJRxAM3g,,,,N,0,0,,,2007-02-01 02:42,2007-02-04 01:05,hbe4678,hbe4678,,,0
2381,12458562,14517,6816088,4047,1,100,N,N,N,CP_Drtn,TT_Task,DT_FixedDUR2,RV_OK,TK_Complete,PK000MU25P,02G MU225 Issue Formal P.O.,,,,0,0,0,0,24,0,0,0,,2006-05-26 00:00,2006-07-11 00:00,2007-11-26 08:00,2007-11-26 08:00,,2007-01-27 00:00,2007-01-27 00:00,,,2006-06-09 08:00,2006-06-13 17:00,,,,,PT_Normal,,,,,o5/sRDMZQjOVIk5H79OBOA,,,,N,0,0,,,2007-02-01 02:42,2007-02-04 01:05,hbe4678,hbe4678,,,0
2382,12458563,14517,6816088,4047,1,100,N,N,N,CP_Drtn,TT_Task,DT_FixedDUR2,RV_OK,TK_Complete,PK000MU25J,02G MU225 Final Negotiate/Interim Award,,,,0,0,0,0,24,0,0,0,,2006-04-18 08:00,2006-05-26 00:00,2007-06-07 08:01,2007-06-07 08:01,,2007-01-27 00:00,2007-01-27 00:00,,,2006-04-18 08:00,2006-04-20 17:00,,,,,PT_Normal,,,,,8deNm9VHTwiMfiG9CSSogw,,,,N,0,0,,,2007-02-01 02:42,2007-02-04 01:05,hbe4678,hbe4678,,,0
2383,12458564,14517,6816088,4047,1,100,N,N,N,CP_Drtn,TT_Task,DT_FixedDUR2,RV_OK,TK_Complete,PK000MU25I,02G MU225 Eval Bids & Issue Recmd,,,,0,0,0,0,160,0,0,0,,2006-03-24 00:00,2006-04-18 00:00,2007-06-07 08:01,2007-06-07 08:01,,2007-01-27 00:00,2007-01-27 00:00,,,2006-03-13 08:00,2006-04-07 17:00,,,,,PT_Normal,,,,,Pwx2qngnTJeTkyZxMV/Vdg,,,,N,0,0,,,2007-02-01 02:42,2007-02-04 01:05,hbe4678,hbe4678,,,0
2384,12458565,14517,6816088,4047,1,100,N,N,N,CP_Drtn,TT_Task,DT_FixedDUR2,RV_OK,TK_Complete,PK000MU25H,02G MU225 Receive Quotes,,,,0,0,0,0,120,0,0,0,,2006-01-31 00:00,2006-02-28 17:00,2007-06-07 08:01,2007-06-07 08:01,,2007-01-27 00:00,2007-01-27 00:00,,,2006-02-27 08:00,2006-03-17 17:00,,,,,PT_Normal,,,,,SFkPbXPPQGWA5wmu1/r5hA,,,,N,0,0,,,2007-02-01 02:42,2007-02-04 01:05,hbe4678,hbe4678,,,0
2385,12458566,14517,6816088,4047,1,100,N,N,N,CP_Drtn,TT_Task,DT_FixedDUR2,RV_OK,TK_Complete,PK000MU25G,02G MU225 Issue RFQ,,,,0,0,0,0,24,0,0,0,,2006-01-30 00:00,2006-01-31 00:00,2007-06-07 08:01,2007-06-07 08:01,,2007-01-27 00:00,2007-01-27 00:00,,,2006-02-27 08:00,2006-03-01 17:00,,,,,PT_Normal,,,,,zHJYFp+nRL6JJBVtjuMqZw,,,,N,0,0,,,2007-02-01 02:42,2007-02-04 01:05,hbe4678,hbe4678,,,0
2386,12458567,14517,6816088,4047,1,100,N,N,N,CP_Drtn,TT_Task,DT_FixedDUR2,RV_OK,TK_Complete,PK000MU11P,05B MU311 Issue Formal P.O.,,,,0,0,0,0,24,0,0,0,,2006-03-16 00:00,2006-03-16 00:00,2007-12-04 08:01,2007-12-04 08:01,,2007-01-27 00:00,2007-01-27 00:00,,,2006-03-16 08:00,2006-03-20 17:00,,,,,PT_Normal,,,,,EF5U28MGQDmQdY04csfVXA,,,,N,0,0,,,2007-02-01 02:42,2007-02-04 01:05,hbe4678,hbe4678,,,0
2387,12458568,14517,6816088,4047,1,100,N,N,N,CP_Drtn,TT_Task,DT_FixedDUR2,RV_OK,TK_Complete,PK000MU11I,05B MU311 Eval Bids & Issue Recmd,,,,0,0,0,0,40,0,0,0,,2006-02-24 00:00,2006-03-03 00:00,2007-05-08 08:01,2007-05-08 08:01,,2007-01-27 00:00,2007-01-27 00:00,,,2006-03-06 08:00,2006-03-10 17:00,,,,,PT_Normal,,,,,NZSeBYm/Riaya44mELv2EQ,,,,N,0,0,,,2007-02-01 02:42,2007-02-04 01:05,hbe4678,hbe4678,,,0
2388,12458569,14517,6816088,4047,1,100,N,N,N,CP_Drtn,TT_Task,DT_FixedDUR2,RV_OK,TK_Complete,PK000MU11H,05B MU311 Receive Quotes,,,,0,0,0,0,120,0,0,0,,2005-12-27 00:00,2006-02-03 00:00,2007-05-08 08:01,2007-05-08 08:01,,2007-01-27 00:00,2007-01-27 00:00,,,2006-02-02 08:00,2006-02-22 17:00,,,,,PT_Normal,,,,,US94Z911Q5ernLxb/S70Yw,,,,N,0,0,,,2007-02-01 02:42,2007-02-04 01:05,hbe4678,hbe4678,,,0
2389,12458570,14517,6816088,4047,1,100,N,N,N,CP_Drtn,TT_Task,DT_FixedDUR2,RV_OK,TK_Complete,PK000MU11G,05B MU311 Issue RFQ,,,,0,0,0,0,24,0,0,0,,2005-12-21 00:00,2005-12-27 00:00,2007-05-08 08:01,2007-05-08 08:01,,2007-01-27 00:00,2007-01-27 00:00,,,2006-01-30 08:00,2006-02-01 17:00,,,,,PT_Normal,,,,,o2Gqh2xvTayy0iEOPKvLew,,,,N,0,0,,,2007-02-01 02:42,2007-02-04 01:05,hbe4678,hbe4678,,,0
2390,12458571,14517,6816088,4173,1,0,N,N,N,CP_Drtn,TT_Task,DT_FixedDUR2,RV_OK,TK_NotStart,PK000MU322,MU322 Transport/Customes COOLING WTR FILTER & CLARIFIER,,808.016666666667,0,168,0,0,0,240,0,0,0,,,,2007-06-19 08:01,2007-07-10 08:01,,2007-03-10 08:00,2007-03-30 17:00,2007-03-10 08:00,2007-03-30 17:00,2007-03-10 08:00,2007-04-08 17:00,,2007-06-19 08:01,2007-07-10 08:01,,PT_Normal,,,,,Xva9Fub4R6KfH/lOKvSW2Q,,,,N,0,0,,,2007-02-01 02:42,2007-02-04 01:00,hbe4678,hbe4678,2007-03-10 08:00,2007-03-30 17:00,168
2391,12458572,14517,6816088,4047,1,0,N,N,N,CP_Drtn,TT_Task,DT_FixedDUR2,RV_OK,TK_Active,PK000MU32S,MU322 - Marshaling COOLING WTR FILTER & CLARIFIER,,568.016666666667,0,240,0,0,0,320,0,0,0,,2006-11-17 08:00,,2007-05-08 08:01,2007-06-19 08:01,2007-03-09 17:00,2007-01-29 08:00,2007-03-09 17:00,2007-01-29 08:00,2007-03-09 17:00,2006-11-17 08:00,2007-01-11 17:00,,2007-05-08 08:01,2007-06-19 08:01,,PT_Normal,,,,,hEH7x2ffRTKH856zy7RCpA,,,,N,0,0,,,2007-02-01 02:42,2007-02-04 01:00,hbe4678,hbe4678,2007-01-29 08:00,2007-03-09 17:00,240
2392,12458573,14517,6816088,4047,1,100,N,N,N,CP_Drtn,TT_Task,DT_FixedDUR2,RV_OK,TK_Complete,PK000MU32K,01D MU322 - Fabricate/PO Promise COOLING WTR FILTER & CLARIFIER,,,,0,0,0,0,640,0,0,0,,2006-05-02 08:00,2006-11-16 00:00,2007-05-08 08:01,2007-05-08 08:01,,2007-01-27 00:00,2007-01-27 00:00,,,2006-05-02 08:00,2006-08-21 17:00,,,,,PT_Normal,,,,,J5rYAg6DRwCltLQcj9p21A,,,,N,0,0,,,2007-02-01 02:42,2007-02-04 01:05,hbe4678,hbe4678,,,0
2393,12458574,14517,6816088,4047,1,100,N,N,N,CP_Drtn,TT_Task,DT_FixedDUR2,RV_OK,TK_Complete,PK000MU32P,01D MU322 Issue Formal P.O.,,,,0,0,0,0,24,0,0,0,,2006-05-01 00:00,2006-05-23 00:00,2007-05-08 08:01,2007-05-08 08:01,,2007-01-27 00:00,2007-01-27 00:00,,,2006-05-12 08:00,2006-05-16 17:00,,,,,PT_Normal,,,,,kylb0aZ2TmGPeOVcsLpNtA,,,,N,0,0,,,2007-02-01 02:42,2007-02-04 01:05,hbe4678,hbe4678,,,0
2394,12458575,14517,6816088,4047,1,100,N,N,N,CP_Drtn,TT_Task,DT_FixedDUR2,RV_OK,TK_Complete,PK000MU32J,01D MU322 Final Negotiate/Interim Award,,,,0,0,0,0,80,0,0,0,,2006-04-24 00:00,2006-05-01 00:00,2007-04-08 08:01,2007-04-08 08:01,,2007-01-27 00:00,2007-01-27 00:00,,,2006-05-02 08:00,2006-05-15 17:00,,,,,PT_Normal,,,,,3y27HfBrTZWW+f/yNo+UmA,,,,N,0,0,,,2007-02-01 02:42,2007-02-04 01:05,hbe4678,hbe4678,,,0
2395,12458576,14517,6816088,4047,1,100,N,N,N,CP_Drtn,TT_Task,DT_FixedDUR2,RV_OK,TK_Complete,PK000MU32H,01D MU322 Receive Quotes,,,,0,0,0,0,120,0,0,0,,2005-12-12 00:00,2006-01-23 00:00,2007-04-08 08:01,2007-04-08 08:01,,2007-01-27 00:00,2007-01-27 00:00,,,2006-02-02 08:00,2006-02-22 17:00,,,,,PT_Normal,,,,,OlptODxpTI69l3qBLgpDHg,,,,N,0,0,,,2007-02-01 02:42,2007-02-04 01:05,hbe4678,hbe4678,,,0
2396,12458577,14517,6816088,4047,1,100,N,N,N,CP_Drtn,TT_Task,DT_FixedDUR2,RV_OK,TK_Complete,PK000MU32G,01D MU322 Issue RFQ,,,,0,0,0,0,24,0,0,0,,2005-11-30 00:00,2005-12-12 00:00,2007-04-08 08:01,2007-04-08 08:01,,2007-01-27 00:00,2007-01-27 00:00,,,2006-01-30 08:00,2006-02-01 17:00,,,,,PT_Normal,,,,,D27hKr7WSkCjlxe+nuXDVw,,,,N,0,0,,,2007-02-01 02:42,2007-02-04 01:05,hbe4678,hbe4678,,,0
2397,12458578,14517,6816088,4047,1,100,N,N,N,CP_Drtn,TT_Task,DT_FixedDUR2,RV_OK,TK_Complete,PK000MU11J,05B MU311 Final Negotiate/Interim Award,,,,0,0,0,0,80,0,0,0,,2006-03-03 00:00,2006-03-16 00:00,2007-05-08 08:01,2007-05-08 08:01,,2007-01-27 00:00,2007-01-27 00:00,,,2006-03-20 08:00,2006-03-31 17:00,,,,,PT_Normal,,,,,iQtGvloGSfir2wHBUXjXaA,,,,N,0,0,,,2007-02-01 02:42,2007-02-04 01:05,hbe4678,hbe4678,,,0
2398,12458579,14517,6816088,13330,1,100,N,N,N,CP_Units,TT_Task,DT_FixedDUR2,RV_OK,TK_Complete,PK000MD34H,Receive Quotes MD304,,,,0,,0,,120,,,0,,2005-03-28 08:00,2005-04-14 17:00,2007-04-15 08:01,2007-04-15 08:01,,2007-01-27 00:00,2007-01-27 00:00,,,2005-03-28 08:00,2005-04-15 17:00,,,,,PT_Normal,,,,,Qdg6U4c+TOiA/L4G7UEwpg,,,,N,,,,,2007-02-01 02:42,2007-02-04 01:05,hbe4678,hbe4678,,,0
2399,12458580,14517,6816088,13330,1,100,N,N,N,CP_Units,TT_Task,DT_FixedDUR2,RV_OK,TK_Complete,PK000MD45H,Receive Quotes MD405,,,,0,0,0,,120,,0,0,,2005-04-01 08:00,2005-04-21 00:00,2007-04-15 08:01,2007-04-15 08:01,,2007-01-27 00:00,2007-01-27 00:00,,,2005-04-01 08:00,2005-04-21 17:00,,,,,PT_Normal,,,,,bBvuLh3RT++HmhUVvDpw8w,,,,N,0,0,,,2007-02-01 02:42,2007-02-04 01:05,hbe4678,hbe4678,,,0
2400,12458581,14517,6816088,13330,1,100,N,N,N,CP_Units,TT_Task,DT_FixedDUR2,RV_OK,TK_Complete,PK000MD47I,Eval Bids & Issue Recmd MD406,,,,0,0,0,0,40,0,0,0,,2005-07-08 00:00,2005-10-20 00:00,2007-01-09 08:01,2007-01-09 08:01,,2007-01-27 00:00,2007-01-27 00:00,,,2005-07-18 08:00,2005-07-22 17:00,,,,,PT_Normal,,,,,wc0s3VPHTSGujwyclHNQZw,,,,N,0,0,,,2007-02-01 02:42,2007-02-04 01:05,hbe4678,hbe4678,,,0
2401,12458582,14517,6816088,13330,1,100,N,N,N,CP_Units,TT_Task,DT_FixedDUR2,RV_OK,TK_Complete,PK000ML31H,Receive Quotes ML313,,,,0,0,0,,120,,0,0,,2005-03-28 08:00,2005-05-05 00:00,2008-01-29 08:01,2008-01-29 08:01,,2007-01-27 00:00,2007-01-27 00:00,,,2005-03-28 08:00,2005-04-15 17:00,,,,,PT_Normal,,,,,HSsysq6VRNiDMGky0BoCIw,,,,N,0,0,,,2007-02-01 02:42,2007-02-04 01:05,hbe4678,hbe4678,,,0
2402,12458583,14517,6816088,13330,1,100,N,N,N,CP_Units,TT_Task,DT_FixedDUR2,RV_OK,TK_Complete,PK000ML42K,ML420 - Fabricate/PO Promise CARTRIDGE FILTERS,,,,0,0,0,0,720,0,0,0,,2005-11-11 00:00,2006-04-28 00:00,2007-11-03 08:01,2007-11-03 08:01,,2007-01-27 00:00,2007-01-27 00:00,,,2005-11-08 08:00,2006-03-15 17:00,,,,,PT_Normal,,,,,DZAmo/XnQrajm/4CjYsXJw,,,,N,0,0,,,2007-02-01 02:42,2007-02-04 01:05,hbe4678,hbe4678,,,0
2403,12458584,14517,6816088,13330,1,100,N,N,N,CP_Units,TT_Task,DT_FixedDUR2,RV_OK,TK_Complete,PK000MU22K,MU222 - Fabricate/PO Promise 2401-U,,,,0,0,0,0,800,0,0,0,,2005-12-05 00:00,2006-10-02 17:00,2007-12-31 08:01,2007-12-31 08:01,,2007-01-27 00:00,2007-01-27 00:00,,,2005-11-14 08:00,2006-04-04 17:00,,,,,PT_Normal,,,,,swmceZDWTEapyzU7mfFzeg,,,,N,0,0,,,2007-02-01 02:42,2007-02-04 01:05,hbe4678,hbe4678,,,0
2404,12458585,14517,6816088,13330,1,100,N,N,N,CP_Units,TT_Task,DT_FixedDUR2,RV_OK,TK_Complete,PK000MBP4U,MB312 - Shop Recv. 101-B Radiant Cast Tube/Riser/Manifold,,,,0,0,0,0,80,0,0,0,,2006-07-24 00:00,2006-07-28 00:00,2007-11-05 08:01,2007-11-05 08:01,,2007-01-27 00:00,2007-01-27 00:00,,,2006-08-14 08:00,2006-08-25 17:00,,,,,PT_Normal,,,,,t4pcV6uUQciTzOzsUMSL2w,,,,N,0,0,,,2007-02-01 02:42,2007-02-04 01:05,hbe4678,hbe4678,,,0
2405,12458586,14517,6816088,13330,1,100,N,N,N,CP_Units,TT_Task,DT_FixedDUR2,RV_OK,TK_Complete,PK000MB65K,MB622 - Fab/PO Promise 101-B Penthouse Circ Fans,,,,0,0,0,0,1120,0,0,0,,2006-02-06 08:00,2006-06-07 00:00,2007-12-17 08:01,2007-12-17 08:01,,2007-01-27 00:00,2007-01-27 00:00,,,2006-02-06 08:00,2006-08-18 17:00,,,,,PT_Normal,,,,,r6oB/AHwRuaZfD0tqLBuCA,,,,N,0,0,,,2007-02-01 02:42,2007-02-04 01:05,hbe4678,hbe4678,,,0
2406,12458587,14517,6816088,13330,1,100,N,N,N,CP_Units,TT_Task,DT_FixedDUR2,RV_OK,TK_Complete,PK000MD22O,MD202 - Transport/Customes TOWERS 103/105-E,,,,0,0,0,0,240,0,0,0,,2006-08-16 00:00,2006-09-14 00:00,2007-10-20 08:01,2007-10-20 08:01,,2007-01-27 00:00,2007-01-27 00:00,,,2006-09-04 08:00,2006-10-13 17:00,,,,,PT_Normal,,,,,900sKEh2T4uRg+jTth3Osg,,,,N,0,0,,,2007-02-01 02:42,2007-02-04 01:05,hbe4678,hbe4678,,,0
2407,12458588,14517,6816088,13330,1,0,N,N,N,CP_Units,TT_Task,DT_FixedDUR2,RV_OK,TK_NotStart,PK000MJ22O,MJ201 - Transport/Customs 101-J,,688.016666666667,0,200,0,0,0,200,0,0,0,,,,2007-07-03 08:01,2007-08-07 08:01,,2007-03-05 08:00,2007-04-06 17:00,2007-03-05 08:00,2007-04-06 17:00,2007-03-05 08:00,2007-04-06 17:00,,2007-07-03 08:01,2007-08-07 08:01,,PT_Normal,,,,,HWQ32GwISK6d8q2RkwQW8A,,,,N,0,0,,,2007-02-01 02:42,2007-02-04 01:00,hbe4678,hbe4678,2007-03-05 08:00,2007-04-06 17:00,200
2408,12458589,14517,6816088,4173,1,0,N,N,N,CP_Units,TT_Task,DT_FixedDUR2,RV_OK,TK_NotStart,PK000MU31O,MU310 - Transport/Customes Injection System & Chlorination Unit,,664,0,168,0,0,0,240,0,0,0,,,,2007-06-01 08:00,2007-06-21 17:00,,2007-03-10 08:00,2007-03-30 17:00,2007-03-10 08:00,2007-03-30 17:00,2007-03-10 08:00,2007-04-08 17:00,,2007-06-01 08:00,2007-06-21 17:00,,PT_Normal,,,,,yytUtv5ERCq85o0/dMi2VA,,,,N,0,0,,,2007-02-01 02:42,2007-02-01 02:42,hbe4678,hbe4678,2007-03-10 08:00,2007-03-30 17:00,168
2409,12458590,14517,6816088,13330,1,100,N,N,N,CP_Units,TT_Task,DT_FixedDUR2,RV_OK,TK_Complete,PK000MJ71J,Final Negotiate/Interim Award - MJ731,,,,0,0,0,0,24,0,0,0,,2006-07-03 08:00,2006-07-07 00:00,2007-02-07 08:01,2007-02-07 08:01,,2007-01-27 00:00,2007-01-27 00:00,,,2006-07-03 08:00,2006-07-05 17:00,,,,,PT_Normal,,,,,e2VUiGb1ScOAl6H1/XXVSA,Rz3yv86otUC/D5djxW83PB,,,N,0,0,,,2007-02-01 02:42,2007-02-04 01:05,hbe4678,hbe4678,,,0
2410,12458591,14517,6816088,13330,1,0,N,N,N,CP_Units,TT_Task,DT_FixedDUR2,RV_OK,TK_Active,PK000MJ71K,MJ731 - Fabricate/PO Promise EMERG PWR GENERATOR,,560.016666666667,0,320,0,0,0,1120,0,0,0,,2006-07-10 00:00,,2007-05-07 08:01,2007-07-02 08:01,2007-03-23 17:00,2007-01-29 08:00,2007-03-23 17:00,2007-01-29 08:00,2007-03-23 17:00,2006-07-17 08:00,2007-01-26 17:00,,2007-05-07 08:01,2007-07-02 08:01,,PT_Normal,,,,,2hEHDROERsaQr7B28oDk1w,wAVuDxbmT0eidSCWCzWjLx,,,N,0,0,,,2007-02-01 02:42,2007-02-04 01:00,hbe4678,hbe4678,2007-01-29 08:00,2007-03-23 17:00,320
2411,12458592,14517,6816088,13330,1,0,N,N,N,CP_Units,TT_Task,DT_FixedDUR2,RV_OK,TK_NotStart,PK000MJ71O,MJ731 - Transport/Customes EMERG PWR GENERATOR,,560.016666666667,0,240,0,0,0,240,0,0,0,,,,2007-07-16 08:01,2007-08-27 08:01,,2007-04-09 08:00,2007-05-18 17:00,2007-04-09 08:00,2007-05-18 17:00,2007-04-09 08:00,2007-05-18 17:00,,2007-07-16 08:01,2007-08-27 08:01,,PT_Normal,,,,,0E9sgcclQQKzqq7PqPFBkw,XtB3o8c5B0imtWPqaPiMcR,,,N,0,0,,,2007-02-01 02:42,2007-02-04 01:00,hbe4678,hbe4678,2007-04-09 08:00,2007-05-18 17:00,240
2412,12458593,14517,6816088,13330,1,100,N,N,N,CP_Units,TT_Task,DT_FixedDUR2,RV_OK,TK_Complete,PK000MJ71P,Issue Formal P.O. for  MJ731,,,,0,0,0,0,80,0,0,0,,2006-07-10 00:00,2006-07-26 00:00,2007-07-02 08:01,2007-07-02 08:01,,2007-01-27 00:00,2007-01-27 00:00,,,2006-07-03 08:00,2006-07-14 17:00,,,,,PT_Normal,,,,,7NMBdAfPQ4WP+vQAtZfZmQ,WIj7LVjvOEmjV5Zj3EAhyx,,,N,0,0,,,2007-02-01 02:42,2007-02-04 01:05,hbe4678,hbe4678,,,0
2413,12458594,14517,6816088,13330,1,0,N,N,N,CP_Units,TT_Task,DT_FixedDUR2,RV_OK,TK_NotStart,PK000MJ71S,MJ731 - Marshaling EMERG PWR GENERATOR,,560.016666666667,0,80,0,0,0,320,0,0,0,,,,2007-07-02 08:01,2007-07-16 08:01,,2007-03-26 08:00,2007-04-06 17:00,2007-03-26 08:00,2007-04-06 17:00,2007-03-26 08:00,2007-05-18 17:00,,2007-07-02 08:01,2007-07-16 08:01,,PT_Normal,,,,,ZQk6K+MlQhGRs42ETrYoWQ,ZysEVpGXmkaMgAky1bv2oB,,,N,0,0,,,2007-02-01 02:42,2007-02-04 01:00,hbe4678,hbe4678,2007-03-26 08:00,2007-04-06 17:00,80
2414,12458595,14517,6816088,13330,1,100,N,N,N,CP_Units,TT_Task,DT_FixedDUR2,RV_OK,TK_Complete,PK000MJ71G,Issue MJ731 RFQ,,,,0,0,0,0,24,0,0,0,,2006-03-20 00:00,2006-04-10 00:00,2007-02-07 08:01,2007-02-07 08:01,,2007-01-27 00:00,2007-01-27 00:00,,,2006-03-27 08:00,2006-03-29 17:00,,,,,PT_Normal,,,,,oPO9FFuPTEuVxiJN176UZw,DElkATxa+EO4PhhZGL2ieR,,,N,0,0,,,2007-02-01 02:42,2007-02-04 01:05,hbe4678,hbe4678,,,0
2415,12458596,14517,6816088,13330,1,100,N,N,N,CP_Units,TT_Task,DT_FixedDUR2,RV_OK,TK_Complete,PK000MJ38F,Issue MJ308 RFQ,,,,0,0,0,,24,,0,0,,2006-02-13 00:00,2006-02-17 00:00,2007-01-09 08:01,2007-01-09 08:01,,2007-01-27 00:00,2007-01-27 00:00,,,2006-01-03 08:00,2006-01-05 17:00,,,,,PT_Normal,,,,,giWE7/szQ9ipV5kYatXwzQ,O/MY3krTakurCXPB8f8jeB,,,N,0,0,,,2007-02-01 02:42,2007-02-04 01:05,hbe4678,hbe4678,,,0
2416,12458597,14517,6816088,13330,1,100,N,N,N,CP_Units,TT_Task,DT_FixedDUR2,RV_OK,TK_Complete,PK000MJ38D,Receive Quotes MJ308,,,,0,0,0,,120,,0,0,,2006-02-20 00:00,2006-03-13 00:00,2007-01-09 08:01,2007-01-09 08:01,,2007-01-27 00:00,2007-01-27 00:00,,,2006-03-20 08:00,2006-04-07 17:00,,,,,PT_Normal,,,,,hEF+t5umQHyfEv8HlqEfgQ,80BtXCL8EkGIOAEfVDVduR,,,N,0,0,,,2007-02-01 02:42,2007-02-04 01:05,hbe4678,hbe4678,,,0
2417,12458598,14517,6816088,13330,1,100,N,N,N,CP_Units,TT_Task,DT_FixedDUR2,RV_OK,TK_Complete,PK000MJ38B,Eval Bids & Issue Recmd MJ308,,,,0,0,0,0,40,0,0,0,,2006-04-27 00:00,2006-05-24 00:00,2007-01-09 08:01,2007-01-09 08:01,,2007-01-27 00:00,2007-01-27 00:00,,,2006-04-17 08:00,2006-04-21 17:00,,,,,PT_Normal,,,,,YezimZFXQvawdKevkW6k+w,MN4pz394j0GpgPL+7NMJIx,,,N,0,0,,,2007-02-01 02:42,2007-02-04 01:05,hbe4678,hbe4678,,,0
2418,12458599,14517,6816088,13330,1,100,N,N,N,CP_Units,TT_Task,DT_FixedDUR2,RV_OK,TK_Complete,PK000MJ38M,Final Negotiate/Interim Award - MJ308,,,,0,0,0,0,80,0,0,0,,2006-05-24 00:00,2006-05-26 00:00,2007-01-09 08:01,2007-01-09 08:01,,2007-01-27 00:00,2007-01-27 00:00,,,2006-05-30 08:00,2006-06-12 17:00,,,,,PT_Normal,,,,,B/FecvORSLqq2NkaxMYHPQ,tYbNlSV5mUGgCGOsBH0Cah,,,N,0,0,,,2007-02-01 02:42,2007-02-04 01:05,hbe4678,hbe4678,,,0
2419,12458600,14517,6816088,13330,1,0,N,N,N,CP_Units,TT_Task,DT_FixedDUR2,RV_OK,TK_Active,PK000MJ38U,MJ308 - Fabricate/PO Promisse ISBL ANSI/API PUMPS,,1584.01666666667,0,80,0,0,0,1600,0,0,0,,2006-05-24 00:00,,2007-11-01 08:01,2007-11-15 08:01,2007-02-09 17:00,2007-01-29 08:00,2007-02-09 17:00,2007-01-29 08:00,2007-02-09 17:00,2006-05-22 08:00,2007-02-23 17:00,,2007-11-01 08:01,2007-11-15 08:01,,PT_Normal,,,,,PpR37abvQY+NEWs71aCD3w,23hVo5bevUaqbW8oWTe5CB,,,N,0,0,,,2007-02-01 02:42,2007-02-04 01:00,hbe4678,hbe4678,2007-01-29 08:00,2007-02-09 17:00,80
2420,12458601,14517,6816088,13330,1,100,N,N,N,CP_Units,TT_Task,DT_FixedDUR2,RV_OK,TK_Complete,PK000MBP1C,MB221 - Marshaling 101-B Convection Modules,,,,0,0,0,0,320,0,0,0,,2006-10-30 08:00,2006-11-09 17:00,2007-10-27 08:01,2007-10-27 08:01,,2007-01-27 00:00,2007-01-27 00:00,,,2006-10-30 08:00,2006-12-22 17:00,,,,,PT_Normal,,,,,nXrphq8qTn+jCXsrtljg2A,4O0AEERiCUWmCW9jQlg4QB,,,N,0,0,,,2007-02-01 02:42,2007-02-04 01:05,hbe4678,hbe4678,,,0
2421,12458602,14517,6816088,13330,1,100,N,N,N,CP_Units,TT_Task,DT_FixedDUR2,RV_OK,TK_Complete,PK000MBP2C,MB221 - Marshaling 101-B Crossover,,,,0,0,0,0,320,0,0,0,,2006-10-30 08:00,2006-11-09 17:00,2008-01-20 08:01,2008-01-20 08:01,,2007-01-27 00:00,2007-01-27 00:00,,,2006-10-30 08:00,2006-12-22 17:00,,,,,PT_Normal,,,,,ZW2bwsgmTnS/BFsb2xfkNg,HOHqbvp0eUSQDMJA661q1h,,,N,0,0,,,2007-02-01 02:42,2007-02-04 01:05,hbe4678,hbe4678,,,0
2422,12458603,14517,6816088,13330,1,100,N,N,N,CP_Units,TT_Task,DT_FixedDUR2,RV_OK,TK_Complete,PK000MBP4C,MB221 - Marshaling 101-B Radiant Coil/Harps,,,,0,0,0,0,320,0,0,0,,2006-10-30 08:00,2006-11-09 17:00,2007-11-05 08:01,2007-11-05 08:01,,2007-01-27 00:00,2007-01-27 00:00,,,2006-10-30 08:00,2006-12-22 17:00,,,,,PT_Normal,,,,,+TA/JT/TSXaDwKJ9JKXoLw,/C0+R4i1SU+H9CO7IKo0dR,,,N,0,0,,,2007-02-01 02:42,2007-02-04 01:05,hbe4678,hbe4678,,,0
2423,12458604,14517,6816088,13330,1,100,N,N,N,CP_Units,TT_Task,DT_FixedDUR2,RV_OK,TK_Complete,PK000MBP5C,MB221 - Marshaling 101-B Radiant Steel Panels,,,,0,0,0,0,320,0,0,0,,2006-08-02 00:00,2006-08-16 00:00,2007-06-07 08:01,2007-06-07 08:01,,2007-01-27 00:00,2007-01-27 00:00,,,2006-10-02 08:00,2006-11-24 17:00,,,,,PT_Normal,,,,,KAdzwj1FTxGTVXz30+Ar2A,7HzhM1FjKUSy/OuA2DKGmh,,,N,0,0,,,2007-02-01 02:42,2007-02-04 01:05,hbe4678,hbe4678,,,0
2424,12458605,14517,6816088,13330,1,100,N,N,N,CP_Units,TT_Task,DT_FixedDUR2,RV_OK,TK_Complete,PK000MBP3C,MB221 - Marshaling 101-B Radiant Ducting,,,,0,0,0,0,320,0,0,0,2006-12-13 00:00,2006-10-17 08:00,2006-11-09 17:00,2007-09-19 08:01,2007-09-19 08:01,,2007-01-27 00:00,2007-01-27 00:00,,,2006-10-17 08:00,2006-12-11 17:00,,,,CS_MSOA,PT_Normal,,,,,WsWOaLh9RHaXJZMU4m+gnw,gONai9mVDU29wf21DwEy7x,,,N,0,0,,,2007-02-01 02:42,2007-02-04 01:05,hbe4678,hbe4678,,,0
2425,12458606,14517,6816088,13330,1,100,N,N,N,CP_Units,TT_Task,DT_FixedDUR2,RV_OK,TK_Complete,PK000MB81S,MB810 - Marshaling 102-B,,,,0,0,0,0,320,0,0,0,,2006-07-17 00:00,2006-08-16 00:00,2007-12-31 08:01,2007-12-31 08:01,,2007-01-27 00:00,2007-01-27 00:00,,,2006-07-21 08:00,2006-09-14 17:00,,,,,PT_Normal,,,,,6IZUvTaYRMOGQZ9OlaFr5g,gyuaFwigW0OhQev4D0hF8R,,,N,0,0,,,2007-02-01 02:42,2007-02-04 01:05,hbe4678,hbe4678,,,0
2426,12458607,14517,6816088,13330,1,100,N,N,N,CP_Units,TT_Task,DT_FixedDUR2,RV_OK,TK_Complete,PK000MB83S,MB630 - Marshaling 101-B  Air Preheater,,,,0,0,0,0,320,0,0,0,,2006-05-15 08:00,2006-08-16 00:00,2008-01-19 08:01,2008-01-19 08:01,,2007-01-27 00:00,2007-01-27 00:00,,,2006-05-15 08:00,2006-07-07 17:00,,,,,PT_Normal,,,,,tyrqOuBXQ8CkntDE9ggM7g,LAUJosAVBEC5mWlH33leHR,,,N,0,0,,,2007-02-01 02:42,2007-02-04 01:05,hbe4678,hbe4678,,,0
2427,12458608,14517,6816088,13330,1,0,N,N,N,CP_Units,TT_Task,DT_FixedDUR2,RV_OK,TK_NotStart,PK000MJ37V,MJ307 - Marshaling ISBL ANSI/API PUMPS,,1536.01666666667,0,120,0,0,0,320,0,0,0,,,,2007-11-15 08:01,2007-12-06 08:01,,2007-02-20 08:00,2007-03-12 17:00,2007-02-20 08:00,2007-03-12 17:00,2007-02-20 08:00,2007-04-16 17:00,,2007-11-15 08:01,2007-12-06 08:01,,PT_Normal,,,,,hiKUUn7yQTC9FwR/9TYucw,+l/Q+l49LUS185sWcoGZ1x,,,N,0,0,,,2007-02-01 02:42,2007-02-04 01:00,hbe4678,hbe4678,2007-02-20 08:00,2007-03-12 17:00,120
2428,12458609,14517,6816088,13330,1,100,N,N,N,CP_Units,TT_Task,DT_FixedDUR2,RV_OK,TK_Complete,PK000MD44T,MD404 - Fabricate/PO Promise 132-F,,,,0,0,0,0,1120,0,0,0,,2005-09-16 00:00,2006-09-29 00:00,2007-04-30 08:01,2007-04-30 08:01,,2007-01-27 00:00,2007-01-27 00:00,,,2005-10-17 08:00,2006-05-02 17:00,,,,,PT_Normal,,,,,HfX7MmURT1mkriA5v5z8IQ,lz7JmYx+sEy+0rcHN1eIuR,,,N,0,0,,,2007-02-01 02:42,2007-02-04 01:05,hbe4678,hbe4678,,,0
2429,12458610,14517,6816088,4050,1,0,N,N,N,CP_Units,TT_Task,DT_FixedDUR2,RV_OK,TK_NotStart,PK000MD44V,MD404 - Transport/Customes 132-F,,744.016666666667,0.0166666666666667,168,0,0,0,240,0,0,0,,,,2007-06-11 08:01,2007-07-02 08:01,,2007-03-10 08:00,2007-03-30 17:00,2007-03-10 08:00,2007-03-30 17:00,2007-03-10 08:00,2007-04-08 17:00,,2007-06-11 08:01,2007-07-02 08:01,,PT_Normal,,,,,mpSa7l35S9CpL6QSiD4dng,YffDd8QipEOJxl0as2EkdB,,,N,0,0,,,2007-02-01 02:42,2007-02-04 01:00,hbe4678,hbe4678,2007-03-10 08:00,2007-03-30 17:00,168
2430,12458611,14517,6816088,13330,1,0,N,N,N,CP_Units,TT_Task,DT_FixedDUR2,RV_OK,TK_Active,PK000MD44U,MD404 - Marshaling 132-F,,520.016666666667,0,240,0,0,0,320,0,0,0,,2006-11-10 00:00,,2007-04-30 08:01,2007-06-11 08:01,2007-03-09 17:00,2007-01-29 08:00,2007-03-09 17:00,2007-01-29 08:00,2007-03-09 17:00,2006-07-06 08:00,2006-08-30 17:00,,2007-04-30 08:01,2007-06-11 08:01,,PT_Normal,,,,,SNFMl0zFQNaBgS0NSpyatQ,l+VhdvB5F0CGyDD2Cut2Vx,,,N,0,0,,,2007-02-01 02:42,2007-02-04 01:00,hbe4678,hbe4678,2007-01-29 08:00,2007-03-09 17:00,240
2431,12458612,14517,6816088,13330,1,100,N,N,N,CP_Units,TT_Task,DT_FixedDUR2,RV_OK,TK_Complete,PK000MB33S,MB333 - Marshaling Riser Transition 101-B,,,,0,0,0,0,320,0,0,0,,2006-06-14 00:00,2006-11-10 00:00,2007-12-03 08:01,2007-12-03 08:01,,2007-01-27 00:00,2007-01-27 00:00,,,2006-06-12 08:00,2006-08-04 17:00,,,,,PT_Normal,,,,,lU1qdyLyR5Kr2rw85UKxcQ,IGl/Mv5ErU+gB0lP4Xw42x,,,N,0,0,,,2007-02-01 02:42,2007-02-04 01:05,hbe4678,hbe4678,,,0
2432,12458613,14517,6816088,13330,1,100,N,N,N,CP_Units,TT_Task,DT_FixedDUR2,RV_OK,TK_Active,PK000MD22T,MD202 - Fabricate/PO Promise TOWERS 150-E,,800,0,360,0,0,0,1800,0,0,0,,2005-09-16 00:00,,2007-06-18 08:00,2007-08-17 17:00,2007-03-30 17:00,2007-01-29 08:00,2007-03-30 17:00,2007-01-29 08:00,2007-03-30 17:00,2005-09-15 08:00,2006-07-28 17:00,,2007-06-18 08:00,2007-08-17 17:00,,PT_Normal,,,,,CkkKrUhpSxCZl4E8rSaB/g,jiRowUMYyUOUV+KxhQ4gqh,,,N,0,0,,,2007-02-01 02:42,2007-02-01 02:43,hbe4678,hbe4678,2007-01-29 08:00,2007-03-30 17:00,360
2433,12458614,14517,6816088,13330,1,0,N,N,N,CP_Units,TT_Task,DT_FixedDUR2,RV_OK,TK_NotStart,PK000MD22V,MD202 - Transport/Customes TOWERS 150-E,,800,0,320,0,0,0,240,0,0,0,,,,2007-08-27 08:00,2007-10-19 17:00,,2007-04-09 08:00,2007-06-01 17:00,2007-04-09 08:00,2007-06-01 17:00,2007-04-09 08:00,2007-05-18 17:00,,2007-08-27 08:00,2007-10-19 17:00,,PT_Normal,,,,,TxclkzlPQjam7KbeFnpFxA,amisz5SwTUG3yMFS1VOsJh,,,N,0,0,,,2007-02-01 02:42,2007-02-01 02:43,hbe4678,hbe4678,2007-04-09 08:00,2007-06-01 17:00,320
2434,12458615,14517,6816088,13330,1,0,N,N,N,CP_Units,TT_Task,DT_FixedDUR2,RV_OK,TK_NotStart,PK000MD22U,MD202 - Marshaling TOWERS 150-E,,800,0,40,0,0,0,320,0,0,0,,,,2007-08-20 08:00,2007-08-24 17:00,,2007-04-02 08:00,2007-04-06 17:00,2007-04-02 08:00,2007-04-06 17:00,2007-04-02 08:00,2007-05-25 17:00,,2007-08-20 08:00,2007-08-24 17:00,,PT_Normal,,,,,vJSKwtMrRFyDJYTZjs4H6A,ZWG0bEl7F0iLOgG7+wXobh,,,N,0,0,,,2007-02-01 02:42,2007-02-01 02:43,hbe4678,hbe4678,2007-04-02 08:00,2007-04-06 17:00,40
2435,12458616,14517,6816088,13330,1,100,N,N,N,CP_Units,TT_Task,DT_FixedDUR2,RV_OK,TK_Complete,PK000MJ37F,Issue MJ307 RFQ,,,,0,0,0,,24,,0,0,,2005-07-13 00:00,2005-07-22 00:00,2007-01-09 08:01,2007-01-09 08:01,,2007-01-27 00:00,2007-01-27 00:00,,,2006-01-03 08:00,2006-01-05 17:00,,,,,PT_Normal,,,,,ADqbm7FpQuuil/B/UT++OQ,fQhb4di5FEumX9yk5ICcph,,,N,0,0,,,2007-02-01 02:42,2007-02-04 01:05,hbe4678,hbe4678,,,0
2436,12458617,14517,6816088,13330,1,100,N,N,N,CP_Units,TT_Task,DT_FixedDUR2,RV_OK,TK_Complete,PK000MJ37D,Receive Quotes MJ307,,,,0,0,0,,120,,0,0,,2005-07-22 00:00,2005-08-19 00:00,2007-01-09 08:01,2007-01-09 08:01,,2007-01-27 00:00,2007-01-27 00:00,,,2006-01-03 08:00,2006-01-23 17:00,,,,,PT_Normal,,,,,t7zPcbYrRv+sxev4qEmUTw,tNcYug9KnU6s1nG416gDqB,,,N,0,0,,,2007-02-01 02:42,2007-02-04 01:05,hbe4678,hbe4678,,,0
2437,12458618,14517,6816088,13330,1,100,N,N,N,CP_Units,TT_Task,DT_FixedDUR2,RV_OK,TK_Complete,PK000MJ37B,Eval Bids & Issue Recmd MJ307,,,,0,0,0,0,40,0,0,0,,2006-01-06 00:00,2006-01-20 17:00,2007-01-09 08:01,2007-01-09 08:01,,2007-01-27 00:00,2007-01-27 00:00,,,2006-01-16 08:00,2006-01-20 17:00,,,,,PT_Normal,,,,,b/nfBDT4SRCfAfKRbLUOqw,/qfsAfLEoUa2Toe42BfVAh,,,N,0,0,,,2007-02-01 02:42,2007-02-04 01:05,hbe4678,hbe4678,,,0
2438,12458619,14517,6816088,13330,1,100,N,N,N,CP_Units,TT_Task,DT_FixedDUR2,RV_OK,TK_Complete,PK000MJ37M,Final Negotiate/Interim Award - MJ307,,,,0,0,0,0,80,0,0,0,,2006-01-20 00:00,2006-02-20 00:00,2007-01-09 08:01,2007-01-09 08:01,,2007-01-27 00:00,2007-01-27 00:00,,,2006-01-23 08:00,2006-02-03 17:00,,,,,PT_Normal,,,,,KcrcJHvdS5er3FDx6dt8GA,JLMKr5O6xUq0FVc9d9P8Kh,,,N,0,0,,,2007-02-01 02:42,2007-02-04 01:05,hbe4678,hbe4678,,,0
2439,12458620,14517,6816088,13330,1,0,N,N,N,CP_Units,TT_Task,DT_FixedDUR2,RV_OK,TK_Active,PK000MJ37U,MJ307 - Fabricate/PO Promise ISBL ANSI/API PUMPS,,1536.01666666667,0,128,0,0,0,1600,0,0,0,,2006-02-20 00:00,,2007-10-24 08:01,2007-11-15 08:01,2007-02-19 17:00,2007-01-29 08:00,2007-02-19 17:00,2007-01-29 08:00,2007-02-19 17:00,2006-02-27 08:00,2006-12-01 17:00,,2007-10-24 08:01,2007-11-15 08:01,,PT_Normal,,,,,en+Xd/LnQpybZM6uRH43eA,nNTA4zUcS0mTodq1gAWbpR,,,N,0,0,,,2007-02-01 02:42,2007-02-04 01:00,hbe4678,hbe4678,2007-01-29 08:00,2007-02-19 17:00,128
2440,12458621,14517,6816088,13330,1,0,N,N,N,CP_Units,TT_Task,DT_FixedDUR2,RV_OK,TK_NotStart,PK000MJ37W,MJ307 - Transport/Customes ISBL ANSI/API PUMP,,1536.01666666667,0,240,0,0,0,240,0,0,0,,,,2007-12-06 08:01,2008-01-17 08:01,,2007-03-13 08:00,2007-04-23 17:00,2007-03-13 08:00,2007-04-23 17:00,2007-03-13 08:00,2007-04-23 17:00,,2007-12-06 08:01,2008-01-17 08:01,,PT_Normal,,,,,zGnFNbTkSOCP8SQGEG2vJw,KegQA+VdBk6W5u4PuDkzcx,,,N,0,0,,,2007-02-01 02:42,2007-02-04 01:00,hbe4678,hbe4678,2007-03-13 08:00,2007-04-23 17:00,240
2441,12458622,14517,6816088,13330,1,100,N,N,N,CP_Units,TT_Task,DT_FixedDUR2,RV_OK,TK_Complete,PK000MJ37R,Issue Formal P.O. for  MJ307,,,,0,0,0,0,80,0,0,0,,2006-02-20 00:00,2006-03-03 00:00,2007-11-15 08:01,2007-11-15 08:01,,2007-01-27 00:00,2007-01-27 00:00,,,2006-02-27 08:00,2006-03-10 17:00,,,,,PT_Normal,,,,,HjhqsbnWStarhzimbUNPgQ,43re5bYyxEKDfCYV6O4Buh,,,N,0,0,,,2007-02-01 02:42,2007-02-04 01:05,hbe4678,hbe4678,,,0
2442,12458623,14517,6816088,13330,1,100,N,N,N,CP_Units,TT_Task,DT_FixedDUR2,RV_OK,TK_Complete,PK000MD45S,MD405 - Marshaling ISBL DRUMS - 156-F & 157-F,,,,0,0,0,0,320,0,0,0,,2006-07-07 00:00,2006-08-16 00:00,2007-08-23 08:01,2007-08-23 08:01,,2007-01-27 00:00,2007-01-27 00:00,,,2006-07-18 08:00,2006-09-11 17:00,,,,,PT_Normal,,,,,WArvUoVGQ8iuMph20wis9A,iFKZL5dUf0eLCDKTPHBYwR,,,N,0,0,,,2007-02-01 02:42,2007-02-04 01:05,hbe4678,hbe4678,,,0
2443,12458624,14517,6816088,13330,1,100,N,N,N,CP_Units,TT_Task,DT_FixedDUR2,RV_OK,TK_Complete,PK000MD47S,MD406 - Marshaling ISBL DRUMS 103-F,,,,0,0,0,0,320,0,0,0,,2006-07-07 00:00,2006-08-16 00:00,2007-12-09 08:01,2007-12-09 08:01,,2007-01-27 00:00,2007-01-27 00:00,,,2006-07-03 08:00,2006-08-25 17:00,,,,,PT_Normal,,,,,tsA5Zlf0RuW/v3cMSWslUg,6IJL9CbXwUukz3h1XBvo5B,,,N,0,0,,,2007-02-01 02:42,2007-02-04 01:05,hbe4678,hbe4678,,,0
2444,12458625,14517,6816088,13330,1,0,N,N,N,CP_Units,TT_Task,DT_FixedDUR2,RV_OK,TK_NotStart,PK000MC32S,MC311 - Marshaling KBR S&T EXCH,,608.033333333333,0,279.983333,0,0,0,320,0,0,0,,,,2007-06-04 08:02,2007-07-23 08:01,,2007-02-16 08:00,2007-04-05 16:59,2007-02-16 08:00,2007-04-05 16:59,2007-02-16 08:00,2007-04-12 17:00,,2007-06-04 08:02,2007-07-23 08:01,,PT_Normal,,,,,2S3LbwmBThy67VNbEpF/JA,a4S5/TFGxEmj67tnepOWKB,,,N,0,0,,,2007-02-01 02:42,2007-02-04 01:00,hbe4678,hbe4678,2007-02-16 08:00,2007-04-05 16:59,279.983333
2445,12458626,14517,6816088,13330,1,0,N,N,N,CP_Units,TT_Task,DT_FixedDUR2,RV_OK,TK_NotStart,PK020MC31S,MC312 - Marshaling 120-C,,720.016666666667,0,40,0,0,0,480,0,0,0,,,,2007-08-06 08:01,2007-08-13 08:01,,2007-04-02 08:00,2007-04-06 17:00,2007-04-02 08:00,2007-04-06 17:00,2007-04-02 08:00,2007-06-22 17:00,,2007-08-06 08:01,2007-08-13 08:01,,PT_Normal,,,,,dS+QdsyqQYeiR/o8SpOs1A,cOBbQ5JK/UyPfrXvAIAYjh,,,N,0,0,,,2007-02-01 02:42,2007-02-04 01:00,hbe4678,hbe4678,2007-04-02 08:00,2007-04-06 17:00,40
2446,12458627,14517,6816088,13330,1,100,N,N,N,CP_Units,TT_Task,DT_FixedDUR2,RV_OK,TK_Complete,PK000MC61S,MC610 - Marshaling DBL PIPE EXCH 188-CA,,,,0,0,0,0,320,0,0,0,,2006-08-01 00:00,2006-08-16 00:00,2007-10-20 08:01,2007-10-20 08:01,,2007-01-27 00:00,2007-01-27 00:00,,,2006-08-07 08:00,2006-09-29 17:00,,,,,PT_Normal,,,,,+6dvvQDWT1SemB+aGE7pLA,qL8f5rqwiEudtC3RXBXx+B,,,N,0,0,,,2007-02-01 02:42,2007-02-04 01:05,hbe4678,hbe4678,,,0
2447,12458628,14517,6816088,13330,1,0,N,N,N,CP_Units,TT_Task,DT_FixedDUR2,RV_OK,TK_NotStart,PK000MD21S,MD201- Marshaling 101-E,,744.016666666667,0,216,0,0,0,320,0,0,0,,,,2007-06-12 08:01,2007-07-19 08:01,,2007-02-01 08:00,2007-03-09 17:00,2007-02-01 08:00,2007-03-09 17:00,2007-02-01 08:00,2007-03-28 17:00,,2007-06-12 08:01,2007-07-19 08:01,,PT_Normal,,,,,T+M8CwAbQf+flrHE/Ktheg,5+sK5kq7FU+BT8IKXT9Vch,,,N,0,0,,,2007-02-01 02:42,2007-02-04 01:00,hbe4678,hbe4678,2007-02-01 08:00,2007-03-09 17:00,216
2448,12458629,14517,6816088,13330,1,100,N,N,N,CP_Units,TT_Task,DT_FixedDUR2,RV_OK,TK_Complete,PK000MD22S,MD202 - Marshaling TOWERS 103/105-E,,,,0,0,0,0,320,0,0,0,,2006-07-07 00:00,2006-08-16 00:00,2007-10-20 08:01,2007-10-20 08:01,,2007-01-27 00:00,2007-01-27 00:00,,,2006-09-07 08:00,2006-11-01 17:00,,,,,PT_Normal,,,,,Vn0V3JVuTL6XIedR/JpSNg,jiRowUMYyUOUV+KxhQ4gqh,,,N,0,0,,,2007-02-01 02:42,2007-02-04 01:05,hbe4678,hbe4678,,,0
2449,12458630,14517,6816088,13330,1,0,N,N,N,CP_Units,TT_Task,DT_FixedDUR2,RV_OK,TK_NotStart,PK000MD31S,MD301 - Marshaling 103-D,,440.016666666667,0,112,0,0,0,480,0,0,0,,,,2007-06-05 08:01,2007-06-25 08:01,,2007-03-20 08:00,2007-04-06 17:00,2007-03-20 08:00,2007-04-06 17:00,2007-03-20 08:00,2007-06-11 17:00,,2007-06-05 08:01,2007-06-25 08:01,,PT_Normal,,,,,jloZ+gj0SNSRyxpV5KxYSA,Vf0xt75bnkirDM+mmDYVkB,,,N,0,0,,,2007-02-01 02:42,2007-02-04 01:00,hbe4678,hbe4678,2007-03-20 08:00,2007-04-06 17:00,112
2450,12458631,14517,6816088,13330,1,0,N,N,N,CP_Units,TT_Task,DT_FixedDUR2,RV_OK,TK_NotStart,PK000MD32S,MD302 - Marshaling 104-D1/2,,680,0,160,0,0,0,320,0,0,0,2006-12-11 00:00,,,2007-06-11 08:00,2007-07-06 17:00,,2007-02-12 08:00,2007-03-09 17:00,2007-02-12 08:00,2007-03-09 17:00,2007-02-12 08:00,2007-04-06 17:00,,2007-06-11 08:00,2007-07-06 17:00,CS_MSOA,PT_Normal,,,,,m1wq9VU6SYSBHx4HrodwVQ,HWV38ANaXUG9AKfXpY2xFB,,,N,0,0,,,2007-02-01 02:42,2007-02-01 02:43,hbe4678,hbe4678,2007-02-12 08:00,2007-03-09 17:00,160
2451,12458632,14517,6816088,13330,1,0,N,N,N,CP_Units,TT_Task,DT_FixedDUR2,RV_OK,TK_NotStart,PK000MD33S,MD303 - Marshaling 105-D,,400.016666666667,0,128,0,0,0,480,0,0,0,,,,2007-06-29 08:01,2007-07-23 08:01,,2007-04-20 08:00,2007-05-11 17:00,2007-04-20 08:00,2007-05-11 17:00,2007-04-20 08:00,2007-07-12 17:00,,2007-06-29 08:01,2007-07-23 08:01,,PT_Normal,,,,,IVSQHDGeS8adOIgYBRROqw,ItLsKGo5Ok2jChU8+clY5B,,,N,0,0,,,2007-02-01 02:42,2007-02-04 01:00,hbe4678,hbe4678,2007-04-20 08:00,2007-05-11 17:00,128
2452,12458633,14517,6816088,13330,1,100,N,N,N,CP_Units,TT_Task,DT_FixedDUR2,RV_OK,TK_Complete,PK000MC23S,MC230 - Marshaling 105/172/183-C,,,,0,0,0,0,320,0,0,0,,2006-10-16 00:00,2006-11-09 00:00,2007-07-02 08:01,2007-07-02 08:01,,2007-01-27 00:00,2007-01-27 00:00,,,2006-11-22 08:00,2007-01-16 17:00,,,,,PT_Normal,,,,,RZWv37MQTRm8mAZv2TUIXA,Ean+ueVl+EK1rzqH9PSYcB,,,N,0,0,,,2007-02-01 02:42,2007-02-04 01:05,hbe4678,hbe4678,,,0
2453,12458634,14517,6816088,13330,1,0,N,N,N,CP_Units,TT_Task,DT_FixedDUR2,RV_OK,TK_NotStart,PK000MC31S,MC310 - Marshaling 101-C & 102-C (Heavy Lift),,64.0166666666667,0,8,0,0,0,416,0,0,0,,,,2007-08-10 08:01,2007-08-13 08:01,,2007-07-31 08:00,2007-07-31 17:00,2007-07-31 08:00,2007-07-31 17:00,2007-07-31 08:00,2007-10-10 17:00,,2007-08-10 08:01,2007-08-13 08:01,,PT_Normal,,,,,ummuIuEsQl2jClhYTp5M+w,iL8zalA8pUW3rbVnV3KfEx,,,N,0,0,,,2007-02-01 02:42,2007-02-04 01:00,hbe4678,hbe4678,2007-07-31 08:00,2007-07-31 17:00,8
2454,12458635,14517,6816088,13330,1,100,N,N,N,CP_Units,TT_Task,DT_FixedDUR2,RV_OK,TK_Complete,PK000MU21S,MU221 - Marshaling LIFT STATION,,,,0,0,0,0,320,0,0,0,,2006-10-03 08:00,2006-12-12 17:00,2007-07-08 17:00,2007-07-08 17:00,,2007-01-27 00:00,2007-01-27 00:00,,,2006-10-03 08:00,2006-11-27 17:00,,,,,PT_Normal,,,,,xC2T/TTPQFqnXhem+gO2zA,NtgXs8TkqEyOLjm0qRCA4R,,,N,0,0,,,2007-02-01 02:42,2007-02-04 01:05,hbe4678,hbe4678,,,0
2455,12458636,14517,6816088,13330,1,100,N,N,N,CP_Units,TT_Task,DT_FixedDUR2,RV_OK,TK_Complete,PK000MU22S,MU222 - Marshaling 2401-U,,,,0,0,0,0,320,0,0,0,,2006-10-03 08:00,2006-11-09 17:00,2007-12-31 08:01,2007-12-31 08:01,,2007-01-27 00:00,2007-01-27 00:00,,,2006-10-03 08:00,2006-11-27 17:00,,,,,PT_Normal,,,,,imDvaCH3TxmwkLmkDzsDGA,wFr6EYYJRkChGh6LlSlr9x,,,N,0,0,,,2007-02-01 02:42,2007-02-04 01:05,hbe4678,hbe4678,,,0
2456,12458637,14517,6816088,13330,1,0,N,N,N,CP_Units,TT_Task,DT_FixedDUR2,RV_OK,TK_Active,PK000MU29S,MU292 - Marshaling 2404-L,,1560.01666666667,0,240,0,0,0,320,0,0,0,,2006-09-18 08:00,,2007-10-29 08:01,2007-12-10 08:01,2007-03-09 17:00,2007-01-29 08:00,2007-03-09 17:00,2007-01-29 08:00,2007-03-09 17:00,2006-09-18 08:00,2006-11-10 17:00,,2007-10-29 08:01,2007-12-10 08:01,,PT_Normal,,,,,6RDl8lv5Snu8w5LBMecciQ,wMHwZaPGskGJogKl/cy/4B,,,N,0,0,,,2007-02-01 02:42,2007-02-04 01:00,hbe4678,hbe4678,2007-01-29 08:00,2007-03-09 17:00,240
2457,12458638,14517,6816088,13330,1,0,N,N,N,CP_Units,TT_Task,DT_FixedDUR2,RV_OK,TK_Active,PK000MU30S,MU300 - Marshaling 2102-U,,608.016666666667,0,240,0,0,0,320,0,0,0,,2006-12-11 08:00,,2007-05-15 08:01,2007-06-26 08:01,2007-03-09 17:00,2007-01-29 08:00,2007-03-09 17:00,2007-01-29 08:00,2007-03-09 17:00,2006-12-11 08:00,2007-02-02 17:00,,2007-05-15 08:01,2007-06-26 08:01,,PT_Normal,,,,,RMFP/HjpRtOaW2cw/GAcRg,N/4ZR8gRBUa9Ok7WnL0cnR,,,N,0,0,,,2007-02-01 02:42,2007-02-04 01:00,hbe4678,hbe4678,2007-01-29 08:00,2007-03-09 17:00,240
2458,12458639,14517,6816088,13330,1,0,N,N,N,CP_Units,TT_Task,DT_FixedDUR2,RV_OK,TK_Active,PK000MU31S,MU310 - Marshaling Injection System & Chlorination Unit,,472,0,240,0,0,0,320,0,0,0,,2007-01-29 08:00,,2007-04-20 08:00,2007-05-31 17:00,2007-03-09 17:00,2007-01-29 08:00,2007-03-09 17:00,2007-01-29 08:00,2007-03-09 17:00,2007-01-29 08:00,2007-03-23 17:00,,2007-04-20 08:00,2007-05-31 17:00,,PT_Normal,,,,,ngpnHtpIS0iqWzxCB/r3LQ,RPZ5bM6NtkC6W1QRWZvnWh,,,N,0,0,,,2007-02-01 02:42,2007-02-01 02:43,hbe4678,hbe4678,2007-01-29 08:00,2007-03-09 17:00,240
2459,12458640,14517,6816088,13330,1,0,N,N,N,CP_Units,TT_Task,DT_FixedDUR2,RV_OK,TK_Active,PK000MU33S,MU330 - Marshaling 2001-U,,888.016666666667,0,240,0,0,0,320,0,0,0,,2006-12-12 08:00,,2007-07-03 08:01,2007-08-14 08:01,2007-03-09 17:00,2007-01-29 08:00,2007-03-09 17:00,2007-01-29 08:00,2007-03-09 17:00,2006-12-12 08:00,2007-02-05 17:00,,2007-07-03 08:01,2007-08-14 08:01,,PT_Normal,,,,,iZMHRJg/ShOuWcPeknQnBw,zPY7gkRrLECoYpmRBhrgsR,,,N,0,0,,,2007-02-01 02:42,2007-02-04 01:00,hbe4678,hbe4678,2007-01-29 08:00,2007-03-09 17:00,240
2460,12458641,14517,6816088,13330,1,100,N,N,N,CP_Units,TT_Task,DT_FixedDUR2,RV_OK,TK_Complete,PK000MU35S,MU350 - Marshaling 101-U DEAERATOR,,,,0,0,0,0,320,0,0,0,,2006-05-25 00:00,2006-08-16 00:00,2007-12-04 08:01,2007-12-04 08:01,,2007-01-27 00:00,2007-01-27 00:00,,,2006-05-30 08:00,2006-07-24 17:00,,,,,PT_Normal,,,,,WRMMD8ufRnmboosmmAUD3A,agNKdWI4l0eqMtfcLKtmsx,,,N,0,0,,,2007-02-01 02:42,2007-02-04 01:05,hbe4678,hbe4678,,,0
2461,12458642,14517,6816088,13330,1,100,N,N,N,CP_Units,TT_Task,DT_FixedDUR2,RV_OK,TK_Complete,PK000MU41S,MU410 - Marshaling 2002-U PKG BOILER,,,,0,0,0,0,320,0,0,0,,2006-07-13 08:00,2006-08-15 17:00,2007-07-31 08:01,2007-07-31 08:01,,2007-01-27 00:00,2007-01-27 00:00,,,2006-07-13 08:00,2006-09-06 17:00,,,,,PT_Normal,,,,,3VYbEkYiT5asV8uIZUywYQ,nZvQCC0bWUigJnUj3+7FHx,,,N,0,0,,,2007-02-01 02:42,2007-02-04 01:05,hbe4678,hbe4678,,,0
2462,12458643,14517,6816088,13330,1,100,N,N,N,CP_Units,TT_Task,DT_FixedDUR2,RV_OK,TK_Complete,PK000MU61S,"MU611 - Marshaling 2101-U, 2101-UJA Thru UJG CW TWR & Fans",,,,0,0,0,0,320,0,0,0,,2006-05-16 00:00,2006-05-26 00:00,2007-04-08 08:01,2007-04-08 08:01,,2007-01-27 00:00,2007-01-27 00:00,,,2006-06-19 08:00,2006-08-11 17:00,,,,,PT_Normal,,,,,+KZ/iCDXQ7qgabQFfTgSKQ,F/lgLlicF0aAzyGzl9IgyB,,,N,0,0,,,2007-02-01 02:42,2007-02-04 01:05,hbe4678,hbe4678,,,0
2463,12458644,14517,6816088,13330,1,0,N,N,N,CP_Units,TT_Task,DT_FixedDUR2,RV_OK,TK_NotStart,PK000MJ34S,MJ304 - Marshaling MP BFW PUMPS,,1488,0,120,0,0,0,320,0,0,0,,,,2007-11-05 08:00,2007-11-23 17:00,,2007-02-16 08:00,2007-03-08 17:00,2007-02-16 08:00,2007-03-08 17:00,2007-02-16 08:00,2007-04-12 17:00,,2007-11-05 08:00,2007-11-23 17:00,,PT_Normal,,,,,NdHLCgTjTEu5S5yqdtukuQ,uXbh3P+as0mi2zCe9H99+R,,,N,0,0,,,2007-02-01 02:42,2007-02-01 02:43,hbe4678,hbe4678,2007-02-16 08:00,2007-03-08 17:00,120
2464,12458645,14517,6816088,13330,1,0,N,N,N,CP_Units,TT_Task,DT_FixedDUR2,RV_OK,TK_Active,PK000MJ35S,MJ305 - Marshaling ISBL ANSI/API PUMPS,,1224,0,256,0,0,0,320,0,0,0,,2006-11-16 08:00,,2007-08-30 08:00,2007-10-12 17:00,,2007-01-29 08:00,2007-03-13 17:00,2007-01-29 08:00,2007-03-13 17:00,2006-11-16 08:00,2007-01-10 17:00,,2007-08-30 08:00,2007-10-12 17:00,,PT_Normal,,,,,MYTyA4lOSMC+HoVK+x5mzw,nNTA4zUcS0mTodq1gAWbpR,,,N,0,0,,,2007-02-01 02:42,2007-02-01 02:43,hbe4678,hbe4678,2007-01-29 08:00,2007-03-13 17:00,256
2465,12458646,14517,6816088,13330,1,0,N,N,N,CP_Units,TT_Task,DT_FixedDUR2,RV_OK,TK_NotStart,PK000MJ36S,MJ305 - Marshaling OSBL PUMPS,,480,0,120,0,0,0,320,0,0,0,,,,2007-05-07 08:00,2007-05-25 17:00,,2007-02-12 08:00,2007-03-02 17:00,2007-02-12 08:00,2007-03-02 17:00,2007-02-12 08:00,2007-04-06 17:00,,2007-05-07 08:00,2007-05-25 17:00,,PT_Normal,,,,,DxQjQZOPQYurNfNUpbQuNA,hCjN9FRQNUiCM2JY1309+R,,,N,0,0,,,2007-02-01 02:42,2007-02-01 02:43,hbe4678,hbe4678,2007-02-12 08:00,2007-03-02 17:00,120
2466,12458647,14517,6816088,13330,1,100,N,N,N,CP_Units,TT_Task,DT_FixedDUR2,RV_OK,TK_Complete,PK000MJ37S,MJ340 - Marshaling METERING PUMPS,,,,0,0,0,0,320,0,0,0,,2006-08-02 00:00,2006-09-07 00:00,2008-01-03 08:01,2008-01-03 08:01,,2007-01-27 00:00,2007-01-27 00:00,,,2006-10-02 08:00,2006-11-24 17:00,,,,,PT_Normal,,,,,R70OeRq5RkWk5QIN8p5ZEg,OCI8ktRHFEGNtjEbyvvTCB,,,N,0,0,,,2007-02-01 02:42,2007-02-04 01:05,hbe4678,hbe4678,,,0
2467,12458648,14517,6816088,13330,1,0,N,N,N,CP_Units,TT_Task,DT_FixedDUR2,RV_OK,TK_NotStart,PK000MJ39S,Marshaling FIREWATER PUMPS,,480,0,120,0,0,0,320,0,0,0,,,,2007-05-07 08:00,2007-05-25 17:00,,2007-02-12 08:00,2007-03-02 17:00,2007-02-12 08:00,2007-03-02 17:00,2007-02-12 08:00,2007-04-06 17:00,,2007-05-07 08:00,2007-05-25 17:00,,PT_Normal,,,,,bk/l1vDWRGi7eICfdUCV5A,25wXtDrzXkWDN2T9Zf9LWR,,,N,0,0,,,2007-02-01 02:42,2007-02-01 02:43,hbe4678,hbe4678,2007-02-12 08:00,2007-03-02 17:00,120
2468,12458649,14517,6816088,13330,1,0,N,N,N,CP_Units,TT_Task,DT_FixedDUR2,RV_OK,TK_NotStart,PK000MJ73S,MJ730 - Marshaling EMERG PWR GENERATOR,,560.016666666667,0,40,0,0,0,320,0,0,0,,,,2007-07-09 08:01,2007-07-16 08:01,,2007-04-02 08:00,2007-04-06 17:00,2007-04-02 08:00,2007-04-06 17:00,2007-04-02 08:00,2007-05-25 17:00,,2007-07-09 08:01,2007-07-16 08:01,,PT_Normal,,,,,of/CY8F+R6qVLKpcx2Iazw,wAVuDxbmT0eidSCWCzWjLx,,,N,0,0,,,2007-02-01 02:42,2007-02-04 01:00,hbe4678,hbe4678,2007-04-02 08:00,2007-04-06 17:00,40
2469,12458650,14517,6816088,13330,1,100,N,N,N,CP_Units,TT_Task,DT_FixedDUR2,RV_OK,TK_Complete,PK000MJ75S,MJ750 - Marshaling SURFACE CONDENSORS,,,,0,0,0,0,320,0,0,0,,2006-06-02 00:00,2006-08-15 00:00,2007-12-25 08:01,2007-12-25 08:01,,2007-01-27 00:00,2007-01-27 00:00,,,2006-06-05 08:00,2006-07-28 17:00,,,,,PT_Normal,,,,,Ux2ZRFiMSiGN+HjwmpyTWw,y7ENjKfqtEGhH84Zj0/0FB,,,N,0,0,,,2007-02-01 02:42,2007-02-04 01:05,hbe4678,hbe4678,,,0
2470,12458651,14517,6816088,13330,1,0,N,N,N,CP_Units,TT_Task,DT_FixedDUR2,RV_OK,TK_Active,PK000ML31S,ML313 - Marshaling 160-L,,2088.01666666667,0,8,0,0,0,320,0,0,0,,2006-11-08 08:00,,2008-01-29 08:01,2008-01-30 08:01,,2007-01-29 08:00,2007-01-29 17:00,2007-01-29 08:00,2007-01-29 17:00,2006-11-08 08:00,2007-01-02 17:00,,2008-01-29 08:01,2008-01-30 08:01,,PT_Normal,,,,,zoIq+g4WR5qrPIGbIoY5XQ,XlYUi4xg4EK/YHOykOKE1R,,,N,0,0,,,2007-02-01 02:42,2007-02-04 01:00,hbe4678,hbe4678,2007-01-29 08:00,2007-01-29 17:00,8
2471,12458652,14517,6816088,13330,1,100,N,N,N,CP_Units,TT_Task,DT_FixedDUR2,RV_OK,TK_Complete,PK000ML33S,ML330 - Marshaling 2101-L,,,,0,0,0,0,320,0,0,0,,2006-09-12 08:00,2006-11-10 00:00,2008-01-26 08:01,2008-01-26 08:01,,2007-01-27 00:00,2007-01-27 00:00,,,2006-09-12 08:00,2006-11-06 17:00,,,,,PT_Normal,,,,,ymQTdVJFT7WIQRVUWwqndw,D4a4vtymp0KNTUsKpUzw9h,,,N,0,0,,,2007-02-01 02:42,2007-02-04 01:05,hbe4678,hbe4678,,,0
2472,12458653,14517,6816088,13330,1,100,N,N,N,CP_Units,TT_Task,DT_FixedDUR2,RV_OK,TK_Complete,PK000MD46S,MD411 - Marshaling OSBL DRUMS - 2203-F & 2204-F,,,,0,0,0,0,320,0,0,0,,2006-06-21 00:00,2006-08-16 00:00,2007-10-30 08:00,2007-10-30 08:00,,2007-01-27 00:00,2007-01-27 00:00,,,2006-07-21 08:00,2006-09-14 17:00,,,,,PT_Normal,,,,,HqnMbLTvR32thf4r7mkJYg,+S5yRxc0c0mBm1MHsSscuR,,,N,0,0,,,2007-02-01 02:42,2007-02-04 01:05,hbe4678,hbe4678,,,0
2473,12458654,14517,6816088,13330,1,100,N,N,N,CP_Units,TT_Task,DT_FixedDUR2,RV_OK,TK_Complete,PK000MD51S,MD501 - Marshaling 107-D,,,,0,0,0,0,320,0,0,0,,2006-08-08 00:00,2006-11-09 17:00,2007-12-03 08:01,2007-12-03 08:01,,2007-01-27 00:00,2007-01-27 00:00,,,2006-08-14 08:00,2006-10-06 17:00,,,,,PT_Normal,,,,,btTIgdQuTzCHqeC54vSCdw,vuwuTFIKnES/j7Mv/By3BR,,,N,0,0,,,2007-02-01 02:42,2007-02-04 01:05,hbe4678,hbe4678,,,0
2474,12458655,14517,6816088,13330,1,0,N,N,N,CP_Units,TT_Task,DT_FixedDUR2,RV_OK,TK_NotStart,PK000MJ22S,MJ201 - Marshaling 101-J,,688.016666666667,0,120,0,0,0,320,0,0,0,,,,2007-06-12 08:01,2007-07-03 08:01,,2007-02-12 08:00,2007-03-02 17:00,2007-02-12 08:00,2007-03-02 17:00,2007-02-12 08:00,2007-04-06 17:00,,2007-06-12 08:01,2007-07-03 08:01,,PT_Normal,,,,,6LpW9S4tR+a+2CFJPk4mpg,5QHX2zddbUG+OkXf+VljDh,,,N,0,0,,,2007-02-01 02:42,2007-02-04 01:00,hbe4678,hbe4678,2007-02-12 08:00,2007-03-02 17:00,120
2475,12458656,14517,6816088,13330,1,100,N,N,N,CP_Units,TT_Task,DT_FixedDUR2,RV_OK,TK_Complete,PK000MJ21S,MJ202 - Marshaling 102/3/5-J,,,,0,0,0,0,320,0,0,0,,2006-09-15 00:00,2006-11-30 00:00,2007-07-23 08:01,2007-07-23 08:01,,2007-01-27 00:00,2007-01-27 00:00,,,2006-10-02 08:00,2006-11-24 17:00,,,,,PT_Normal,,,,,dfBDeZolQDSVOXoyYb2sPQ,4bkKlVXQ60W0BQY3rnhdHR,,,N,0,0,,,2007-02-01 02:42,2007-02-04 01:05,hbe4678,hbe4678,,,0
2476,12458657,14517,6816088,13330,1,0,N,N,N,CP_Units,TT_Task,DT_FixedDUR2,RV_OK,TK_NotStart,PK000MJ31S,MJ301 - Marshaling 104-J,,1344,0,176,0,0,0,320,0,0,0,,,,2007-10-25 08:00,2007-11-23 17:00,,2007-03-05 08:00,2007-04-03 17:00,2007-03-05 08:00,2007-04-03 17:00,2007-03-05 08:00,2007-04-27 17:00,,2007-10-25 08:00,2007-11-23 17:00,,PT_Normal,,,,,+/L6f95jRqSTHLpgxg829w,YrAXccdIzkClnKVDkU5s5R,,,N,0,0,,,2007-02-01 02:42,2007-02-01 02:43,hbe4678,hbe4678,2007-03-05 08:00,2007-04-03 17:00,176
2477,12458658,14517,6816088,13330,1,0,N,N,N,CP_Units,TT_Task,DT_FixedDUR2,RV_OK,TK_NotStart,PK000MJ32S,MJ302 - Marshaling 107-JA/JB/JC,,1400,0,120,0,0,0,320,0,0,0,,,,2007-10-22 08:00,2007-11-09 17:00,,2007-02-19 08:00,2007-03-09 17:00,2007-02-19 08:00,2007-03-09 17:00,2007-02-19 08:00,2007-04-13 17:00,,2007-10-22 08:00,2007-11-09 17:00,,PT_Normal,,,,,wneCIFuIRga9toO6P6DzaQ,C4yt0hZeA0+cwHBkKsXtYB,,,N,0,0,,,2007-02-01 02:42,2007-02-01 02:43,hbe4678,hbe4678,2007-02-19 08:00,2007-03-09 17:00,120
2478,12458659,14517,6816088,13330,1,0,N,N,N,CP_Units,TT_Task,DT_FixedDUR2,RV_OK,TK_NotStart,PK000MJ33S,MJ303 - Marshaling CW PUMPS,,216,0,104,0,0,0,320,0,0,0,,,,2007-05-09 08:00,2007-05-25 17:00,,2007-04-02 08:00,2007-04-18 17:00,2007-04-02 08:00,2007-04-18 17:00,2007-04-02 08:00,2007-05-25 17:00,,2007-05-09 08:00,2007-05-25 17:00,,PT_Normal,,,,,7Do9skw0Q26iUNfYVUHYHQ,tocWUw9eFEuuYeCQge0ZfB,,,N,0,0,,,2007-02-01 02:42,2007-02-01 02:43,hbe4678,hbe4678,2007-04-02 08:00,2007-04-18 17:00,104
2479,12458660,14517,6816088,13330,1,0,N,N,N,CP_Units,TT_Task,DT_FixedDUR2,RV_OK,TK_NotStart,PK000MD34S,"MD304 - Marshaling 106-D, 109-DA/B",,1600,0,56,0,0,0,336,0,0,0,2006-12-29 00:00,,,2007-12-06 08:00,2007-12-14 17:00,,2007-03-01 08:00,2007-03-09 17:00,2007-03-01 08:00,2007-03-09 17:00,2007-03-01 08:00,2007-04-27 17:00,,2007-12-06 08:00,2007-12-14 17:00,CS_MSOA,PT_Normal,,,,,ZY1TYzj3TbeQjZJAjWYYDw,iwYde+IuTkW//8Lu/V1t8h,,,N,0,0,,,2007-02-01 02:42,2007-02-01 02:43,hbe4678,hbe4678,2007-03-01 08:00,2007-03-09 17:00,56
2480,12458661,14517,6816088,13330,1,100,N,N,N,CP_Units,TT_Task,DT_FixedDUR2,RV_OK,TK_Complete,PK000MD41K,MD401 - Fabricate/PO Promise 101-F,,,,0,0,0,0,1600,0,0,0,,2005-09-23 00:00,2006-11-15 00:00,2007-10-01 08:00,2007-10-01 08:00,,2007-01-27 00:00,2007-01-27 00:00,,,2005-09-12 08:00,2006-06-20 17:00,,,,,PT_Normal,,,,,F4OpBsW9SPKOjX0wMd0hQw,PFp2UqJcZU2qJMCTha2QsB,,,N,0,0,,,2007-02-01 02:42,2007-02-04 01:05,hbe4678,hbe4678,,,0
2481,12458662,14517,6816088,13330,1,0,N,N,N,CP_Units,TT_Task,DT_FixedDUR2,RV_OK,TK_NotStart,PK000MD42S,"MD402 -Marshaling 102-F1, 102-F2",,1040,0,40,0,0,0,320,0,0,0,,,,2007-10-22 08:00,2007-10-26 17:00,,2007-04-23 08:00,2007-04-27 17:00,2007-04-23 08:00,2007-04-27 17:00,2007-04-23 08:00,2007-06-15 17:00,,2007-10-22 08:00,2007-10-26 17:00,,PT_Normal,,,,,l+0tpYMpQVukDQb2YZ+IVQ,ztnqOyuBo0uQlL6Wdwn6Yh,,,N,0,0,,,2007-02-01 02:42,2007-02-01 02:43,hbe4678,hbe4678,2007-04-23 08:00,2007-04-27 17:00,40
2482,12458663,14517,6816088,13330,1,0,N,N,N,CP_Units,TT_Task,DT_FixedDUR2,RV_OK,TK_NotStart,PK000MD43S,MD403 - Marshaling 106-F,,1080,0,264,0,0,0,480,0,0,0,,,,2007-10-17 08:00,2007-11-30 17:00,,2007-04-11 08:00,2007-05-25 17:00,2007-04-11 08:00,2007-05-25 17:00,2007-04-11 08:00,2007-07-03 17:00,,2007-10-17 08:00,2007-11-30 17:00,,PT_Normal,,,,,FitnOOnrTT+KTOK3WAELpQ,J/INJVp6WEGAQteHXlYflx,,,N,0,0,,,2007-02-01 02:42,2007-02-01 02:43,hbe4678,hbe4678,2007-04-11 08:00,2007-05-25 17:00,264
2483,12458664,14517,6816088,13330,1,100,N,N,N,CP_Units,TT_Task,DT_FixedDUR2,RV_OK,TK_Complete,PK000MD44S,MD404 - Marshaling 109-F,,,,0,0,0,0,320,0,0,0,,2006-07-03 00:00,2006-08-16 00:00,2007-07-02 08:01,2007-07-02 08:01,,2007-01-27 00:00,2007-01-27 00:00,,,2006-07-17 08:00,2006-09-08 17:00,,,,,PT_Normal,,,,,Z7c05Ub8SVCUrF/klxFRnA,lz7JmYx+sEy+0rcHN1eIuR,,,N,0,0,,,2007-02-01 02:42,2007-02-04 01:05,hbe4678,hbe4678,,,0
2484,12458665,14517,6816088,13330,1,0,N,N,N,CP_Units,TT_Task,DT_FixedDUR2,RV_OK,TK_Active,PK020MC31K,MC312 - Fabricate/PO Promise 120-C,,720.016666666667,0,360,0,0,0,2560,0,0,0,,2005-09-21 00:00,,2007-06-04 08:01,2007-08-06 08:01,2007-03-30 17:00,2007-01-29 08:00,2007-03-30 17:00,2007-01-29 08:00,2007-03-30 17:00,2005-11-14 08:00,2007-02-06 17:00,,2007-06-04 08:01,2007-08-06 08:01,,PT_Normal,,,,,APCpn9IlR6CAbyaFkbha7Q,a4S5/TFGxEmj67tnepOWKB,,,N,0,0,,,2007-02-01 02:42,2007-02-04 01:00,hbe4678,hbe4678,2007-01-29 08:00,2007-03-30 17:00,360
2485,12458666,14517,6816088,13330,1,0,N,N,N,CP_Units,TT_Task,DT_FixedDUR2,RV_OK,TK_NotStart,PK020MC31L,MC312 - Transport/Customes 120-C,,720.016666666667,0,160,0,0,0,160,0,0,0,,,,2007-08-13 08:01,2007-09-10 08:01,,2007-04-09 08:00,2007-05-04 17:00,2007-04-09 08:00,2007-05-04 17:00,2007-04-09 08:00,2007-05-04 17:00,,2007-08-13 08:01,2007-09-10 08:01,,PT_Normal,,,,,Y/qHXIGgQxaWHVhA5gi8RQ,BUP7FAj3G0yANW3mBaWNNx,,,N,0,0,,,2007-02-01 02:42,2007-02-04 01:00,hbe4678,hbe4678,2007-04-09 08:00,2007-05-04 17:00,160
2486,12458667,14517,6816088,13330,1,100,N,N,N,CP_Units,TT_Task,DT_FixedDUR2,RV_OK,TK_Complete,PK020MC31H,"MC312 - (120,121-C) - Issue Formal P.O.",,,,0,0,0,0,24,0,0,0,,2005-09-22 00:00,2005-10-20 00:00,2007-08-06 08:01,2007-08-06 08:01,,2007-01-27 00:00,2007-01-27 00:00,,,2005-11-04 08:00,2005-11-08 17:00,,,,,PT_Normal,,,,,HzIhhX+AR8SHcW6g7iya5g,25jhoJAu3U6Rxl/jN3AzIx,,,N,0,0,,,2007-02-01 02:42,2007-02-04 01:05,hbe4678,hbe4678,,,0
2487,12458668,14517,6816088,13330,1,100,N,N,N,CP_Units,TT_Task,DT_FixedDUR2,RV_OK,TK_Complete,PK000PR20B,PR201 KAAP Catalyst - Issue RFQ,,,,0,0,0,0,24,0,0,0,,2005-09-09 00:00,2005-09-12 00:00,2007-03-06 08:01,2007-03-06 08:01,,2007-01-27 00:00,2007-01-27 00:00,,,2005-06-27 08:00,2005-06-29 17:00,,,,,PT_Normal,,,,,UO5h5LcCRY2q4x6CeZHEjw,hDI/jqXjx0SMhzRiLpvdFh,,,N,0,0,,,2007-02-01 02:42,2007-02-04 01:05,hbe4678,hbe4678,,,0
2488,12458669,14517,6816088,13330,1,100,N,N,N,CP_Units,TT_Task,DT_FixedDUR2,RV_OK,TK_Complete,PK000PR20C,PR201 KAAP Catalyst - Receive Quotes,,,,0,0,0,0,120,0,0,0,,2005-09-12 00:00,2005-10-18 00:00,2007-03-06 08:01,2007-03-06 08:01,,2007-01-27 00:00,2007-01-27 00:00,,,2005-08-03 08:00,2005-08-23 17:00,,,,,PT_Normal,,,,,/btML6t9QRWaDMoe2HtRmg,yabavsZbEEW7tXUvC9P57x,,,N,0,0,,,2007-02-01 02:42,2007-02-04 01:05,hbe4678,hbe4678,,,0
2489,12458670,14517,6816088,13330,1,100,N,N,N,CP_Units,TT_Task,DT_FixedDUR2,RV_OK,TK_Complete,PK000PR20E,PR201 KAAP Catalyst - Eval Bids & Issue Recmd,,,,0,0,0,0,120,0,0,0,,2005-11-02 00:00,2005-11-17 00:00,2007-03-06 08:01,2007-03-06 08:01,,2007-01-27 00:00,2007-01-27 00:00,,,2005-12-01 08:00,2005-12-21 17:00,,,,,PT_Normal,,,,,dkk2SeT6QsW23btqy4oxjw,VITCbTEoA0ildEK7QpRZnx,,,N,0,0,,,2007-02-01 02:42,2007-02-04 01:05,hbe4678,hbe4678,,,0
2490,12458671,14517,6816088,13330,1,100,N,N,N,CP_Units,TT_Task,DT_FixedDUR2,RV_OK,TK_Complete,PK000PR20F,PR201 KAAP Catalyst - Final Negotiate/Interim Award,,,,0,0,0,0,24,0,0,0,,2005-12-05 00:00,2006-01-09 00:00,2007-03-06 08:01,2007-03-06 08:01,,2007-01-27 00:00,2007-01-27 00:00,,,2006-02-02 08:01,2006-02-07 08:01,,,,,PT_Normal,,,,,K8xGEKJ6RGyDygIKrLu5HA,VI/yI8IJx02BWEfpQKI1+x,,,N,0,0,,,2007-02-01 02:42,2007-02-04 01:05,hbe4678,hbe4678,,,0
2491,12458672,14517,6816088,13330,1,0,N,N,N,CP_Units,TT_Task,DT_FixedDUR2,RV_OK,TK_Active,PK000PR20H,PR201 KAAP Catalyst - Fabricate/Exworks,,208.016666666667,0,1768,0,0,0,2816,0,0,0,,2006-01-10 00:00,,2007-03-06 08:01,2008-01-09 08:01,2007-12-03 17:00,2007-01-29 08:00,2007-12-03 17:00,2007-01-29 08:00,2007-12-03 17:00,2006-02-06 08:00,2007-06-12 17:00,,2007-03-06 08:01,2008-01-09 08:01,,PT_Normal,,,,,VmiqtvjWQ7+xgrAJhIZerQ,gH/UIaMXcEq/UUdvJqMvbx,,,N,0,0,,,2007-02-01 02:42,2007-02-04 01:00,hbe4678,hbe4678,2007-01-29 08:00,2007-12-03 17:00,1768
2492,12458673,14517,6816088,13330,1,0,N,N,N,CP_Units,TT_Task,DT_FixedDUR2,RV_OK,TK_NotStart,PK000PR20J,PR201 KAAP Catalyst - Transport & Deliver,,208.016666666667,0,400,0,0,0,400,0,0,0,,,,2008-01-09 08:01,2008-03-19 08:01,,2007-12-04 08:00,2008-02-11 17:00,2007-12-04 08:00,2008-02-11 17:00,2007-12-04 08:00,2008-02-11 17:00,,2008-01-09 08:01,2008-03-19 08:01,,PT_Normal,,,,,y7yQQAWhTw6USmrkJQ/IDw,o4AzLTiCJkG+DZmtz70v8h,,,N,0,0,,,2007-02-01 02:42,2007-02-04 01:00,hbe4678,hbe4678,2007-12-04 08:00,2008-02-11 17:00,400
2493,12458674,14517,6816088,13330,1,100,N,N,N,CP_Units,TT_Task,DT_FixedDUR2,RV_OK,TK_Complete,PK000PR20G,PR201 KAAP Catalyst - Issue Formal P.O.,,,,0,0,0,0,80,0,0,0,,2006-01-09 00:00,2006-01-09 00:00,2008-01-09 08:01,2008-01-09 08:01,,2007-01-27 00:00,2007-01-27 00:00,,,2006-02-06 08:01,2006-02-20 08:01,,,,,PT_Normal,,,,,m5e7eDvPRV+EFK/XlLICfw,vHkVZhI/fEmHTG6987r3Mh,,,N,0,0,,,2007-02-01 02:42,2007-02-04 01:05,hbe4678,hbe4678,,,0
2494,12458675,14517,6816088,13330,1,100,N,N,N,CP_Units,TT_Task,DT_FixedDUR2,RV_OK,TK_Complete,PK020MC31B,"MC312 - (120,121-C) - Issue RFQ",,,,0,,0,,40,,,0,,2005-03-22 08:00,2005-03-28 17:00,2007-05-07 08:00,2007-05-07 08:00,,2007-01-27 00:00,2007-01-27 00:00,,,2005-03-22 08:00,2005-03-28 17:00,,,,,PT_Normal,,,,,1TylnWtEQmKkbyb22u0bIQ,oNmj0cwNr0myGW3KUOWbtB,,,N,,,,,2007-02-01 02:42,2007-02-04 01:05,hbe4678,hbe4678,,,0
2495,12458676,14517,6816088,13330,1,100,N,N,N,CP_Units,TT_Task,DT_FixedDUR2,RV_OK,TK_Complete,PK020MC3C,"MC312 - (120,121-C) - Receive Quotes",,,,0,0,0,,120,,0,0,,2005-03-29 08:00,2005-06-03 17:00,2007-05-07 08:00,2007-05-07 08:00,,2007-01-27 00:00,2007-01-27 00:00,,,2005-03-29 08:00,2005-04-18 17:00,,,,,PT_Normal,,,,,o3z6sf0UQ2yC/MYsmkANoQ,JZwR347vTUSZhj+8NGjKhR,,,N,0,0,,,2007-02-01 02:42,2007-02-04 01:05,hbe4678,hbe4678,,,0
2496,12458677,14517,6816088,13330,1,100,N,N,N,CP_Units,TT_Task,DT_FixedDUR2,RV_OK,TK_Complete,PK020MC31E,"MC312 - (120,121-C) - Eval Bids & Issue Recmd",,,,0,0,0,0,160,0,0,0,,2005-08-12 08:00,2005-09-19 00:00,2007-05-07 08:00,2007-05-07 08:00,,2007-01-27 00:00,2007-01-27 00:00,,,2005-08-12 08:00,2005-09-08 17:00,,,,,PT_Normal,,,,,ZJMHB6cESv+sE38+lkfnlQ,TT6Na3xGsE29JtqftSuo9R,,,N,0,0,,,2007-02-01 02:42,2007-02-04 01:05,hbe4678,hbe4678,,,0
2497,12458678,14517,6816088,13330,1,100,N,N,N,CP_Units,TT_Task,DT_FixedDUR2,RV_OK,TK_Complete,PK000MC21S,MC210 - Marshaling 110/115/124/128/130/133/134/160/167/173/174-C,,,,0,0,0,0,320,0,0,0,,2006-10-02 00:00,2006-11-09 17:00,2007-07-02 08:01,2007-07-02 08:01,,2007-01-27 00:00,2007-01-27 00:00,,,2006-10-24 08:00,2006-12-18 17:00,,,,,PT_Normal,,,,,mF6MFZbPTLK8zEDoWq6Xuw,xi4LiyelTUqQQDMTrC2N3x,,,N,0,0,,,2007-02-01 02:42,2007-02-04 01:05,hbe4678,hbe4678,,,0
2498,12458679,14517,6816088,13330,1,0,N,N,N,CP_Units,TT_Task,DT_FixedDUR2,RV_OK,TK_NotStart,PK000MD22N,MD201- Marshaling 102-E,,496.016666666667,0,16,0,0,0,320,0,0,0,,,,2007-07-02 08:01,2007-07-04 08:01,,2007-04-05 08:00,2007-04-06 17:00,2007-04-05 08:00,2007-04-06 17:00,2007-04-05 08:00,2007-05-30 17:00,,2007-07-02 08:01,2007-07-04 08:01,,PT_Normal,,,,,izFsysfQSJWdoH0GEP7PUg,+T6k339BXESQp7eeHvEyuh,,,N,0,0,,,2007-02-01 02:42,2007-02-04 01:00,hbe4678,hbe4678,2007-04-05 08:00,2007-04-06 17:00,16
2499,12458680,14517,6816088,13330,1,0,N,N,N,CP_Units,TT_Task,DT_FixedDUR2,RV_OK,TK_Active,PK000MD21M,MD201 - Fabricate/PO Promise 102-E,,496.016666666667,0,384,0,0,0,3160,0,0,0,,2005-10-17 08:00,,2007-04-25 08:01,2007-07-02 08:01,2007-04-04 17:00,2007-01-29 08:00,2007-04-04 17:00,2007-01-29 08:00,2007-04-04 17:00,2005-10-17 08:00,2007-04-24 17:00,,2007-04-25 08:01,2007-07-02 08:01,,PT_Normal,,,,,Jz+IKCEXQISUO4TTsGaNRA,5+sK5kq7FU+BT8IKXT9Vch,,,N,0,0,,,2007-02-01 02:42,2007-02-04 01:00,hbe4678,hbe4678,2007-01-29 08:00,2007-04-04 17:00,384
2500,12458681,14517,6816088,13330,1,0,N,N,N,CP_Units,TT_Task,DT_FixedDUR2,RV_OK,TK_NotStart,PK000MD211,MD201 - Transport/Customes 102-E,,496.016666666667,0,240,0,0,0,240,0,0,0,,,,2007-07-04 08:01,2007-08-15 08:01,,2007-04-09 08:00,2007-05-18 17:00,2007-04-09 08:00,2007-05-18 17:00,2007-04-09 08:00,2007-05-18 17:00,,2007-07-04 08:01,2007-08-15 08:01,,PT_Normal,,,,,n4L/tH6KSduJLGMsrjdkBg,cpoeaqWiVESYb0nfjWCg4x,,,N,0,0,,,2007-02-01 02:42,2007-02-04 01:00,hbe4678,hbe4678,2007-04-09 08:00,2007-05-18 17:00,240
2501,12458682,14517,6816088,13330,1,100,N,N,N,CP_Units,TT_Task,DT_FixedDUR2,RV_OK,TK_Complete,PK000ML51S,ML512 - Marshaling 2102-L LOADING ARM,,,,0,0,0,0,320,0,0,0,,2006-06-29 00:00,2006-09-08 00:00,2007-12-04 08:01,2007-12-04 08:01,,2007-01-27 00:00,2007-01-27 00:00,,,2006-07-25 08:00,2006-09-18 17:00,,,,,PT_Normal,,,,,bI/erusdRce/5Z1asFcaTw,mwHpc8HWNUCMQ7Wy/kcUSB,,,N,0,0,,,2007-02-01 02:42,2007-02-04 01:05,hbe4678,hbe4678,,,0
2502,12458683,14517,6816088,13330,1,100,N,N,N,CP_Units,TT_Task,DT_FixedDUR2,RV_OK,TK_Complete,PK000ML42S,ML420 - Marshaling CARTRIDGE FILTERS,,,,0,0,0,0,320,0,0,0,,2006-05-01 08:00,2006-08-16 00:00,2007-11-03 08:01,2007-11-03 08:01,,2007-01-27 00:00,2007-01-27 00:00,,,2006-05-01 08:00,2006-06-23 17:00,,,,,PT_Normal,,,,,3am188ewSXmfgTtbRi4apg,EbatesqW90GNh+NOJnrK3R,,,N,0,0,,,2007-02-01 02:42,2007-02-04 01:05,hbe4678,hbe4678,,,0
2503,12458684,14517,6816088,13330,1,100,N,N,N,CP_Units,TT_Task,DT_FixedDUR2,RV_OK,TK_Complete,PK000ML43S,ML430 - Marshaling 110-L BENFIELD MIXER,,,,0,0,0,0,320,0,0,0,,2006-04-11 00:00,2006-08-16 00:00,2007-11-03 08:01,2007-11-03 08:01,,2007-01-27 00:00,2007-01-27 00:00,,,2006-05-09 08:00,2006-07-03 17:00,,,,,PT_Normal,,,,,LBTq7ReORZ6zHUsBNAnEHA,XiIHVgPprk2ENZMiY/HVYx,,,N,0,0,,,2007-02-01 02:42,2007-02-04 01:05,hbe4678,hbe4678,,,0
2504,12458685,14517,6816088,13330,1,0,N,N,N,CP_Units,TT_Task,DT_FixedDUR2,RV_OK,TK_NotStart,PK000ML50S,ML500 - Marshaling 2003-L PAI/IA,,624,0,152,0,0,0,320,0,0,0,,,,2007-06-29 08:00,2007-07-25 17:00,,2007-03-13 08:00,2007-04-06 17:00,2007-03-13 08:00,2007-04-06 17:00,2007-03-13 08:00,2007-05-07 17:00,,2007-06-29 08:00,2007-07-25 17:00,,PT_Normal,,,,,Kq5SdPyqTlivB6EZn0n4dA,XWfVQCzuA0O1ZmbgvOuwjR,,,N,0,0,,,2007-02-01 02:42,2007-02-01 02:43,hbe4678,hbe4678,2007-03-13 08:00,2007-04-06 17:00,152
2505,12458686,14517,6816088,13330,1,100,N,N,N,CP_Units,TT_Task,DT_FixedDUR2,RV_OK,TK_Complete,PK000MD42B,MD402 - Transport/Customes 144-F,,,,0,0,0,0,240,0,0,0,,2006-08-16 00:00,2006-09-14 00:00,2007-12-31 08:01,2007-12-31 08:01,,2007-01-27 00:00,2007-01-27 00:00,,,2006-09-11 08:00,2006-10-20 17:00,,,,,PT_Normal,,,,,BaPmMkYeQg6gzc4aCEQuWA,6jSa2Ra9cEO7lsFG8XWzhB,,,N,0,0,,,2007-02-01 02:42,2007-02-04 01:05,hbe4678,hbe4678,,,0
2506,12458687,14517,6816088,13330,1,100,N,N,N,CP_Units,TT_Task,DT_FixedDUR2,RV_OK,TK_Complete,PK000MD45C,MD405 - Transport/Customes ISBL DRUMS - 115-F,,,,0,0,0,0,240,0,0,0,,2006-08-16 00:00,2006-09-14 00:00,2007-10-20 08:01,2007-10-20 08:01,,2007-01-27 00:00,2007-01-27 00:00,,,2006-10-24 08:00,2006-12-04 17:00,,,,,PT_Normal,,,,,Gn5qB3c6Tqe0O/GnoySvhw,3VGou4Q3Qk+timH9AcjTzg,,,N,0,0,,,2007-02-01 02:42,2007-02-04 01:05,hbe4678,hbe4678,,,0
2507,12458688,14517,6816088,13330,1,100,N,N,N,CP_Units,TT_Task,DT_FixedDUR2,RV_OK,TK_Complete,PK000MD45A,MD405 - Fabricate/PO Promise ISBL DRUMS - 115-F,,,,0,0,0,0,1000,0,0,0,,2005-09-16 00:00,2006-07-17 00:00,2007-10-20 08:01,2007-10-20 08:01,,2007-01-27 00:00,2007-01-27 00:00,,,2005-09-12 08:00,2006-03-07 17:00,,,,,PT_Normal,,,,,cbCGbQ+vSF2eBdzEjd51dw,d7wbqUDA0UiWF94OrWZDEA,,,N,0,0,,,2007-02-01 02:42,2007-02-04 01:05,hbe4678,hbe4678,,,0
2508,12458689,14517,6816088,13330,1,100,N,N,N,CP_Units,TT_Task,DT_FixedDUR2,RV_OK,TK_Complete,PK000MD45B,MD405 - Marshaling ISBL DRUMS - 115-F,,,,0,0,0,0,320,0,0,0,,2006-07-18 00:00,2006-08-16 00:00,2007-10-20 08:01,2007-10-20 08:01,,2007-01-27 00:00,2007-01-27 00:00,,,2006-08-02 08:00,2006-09-26 17:00,,,,,PT_Normal,,,,,J/6MMI2URni5K3OWDQaM3w,c4cYBf8oBEGPW8f2oNfdPQ,,,N,0,0,,,2007-02-01 02:42,2007-02-04 01:05,hbe4678,hbe4678,,,0
2509,12458690,14517,6816088,13330,1,100,N,N,N,CP_Units,TT_Task,DT_FixedDUR2,RV_OK,TK_Complete,PK000MD104,MD305 Merc. Removal Bed - Issue RFQ,,,,0,0,0,,24,,0,0,,2006-01-05 00:00,2006-01-09 17:00,2007-06-19 08:01,2007-06-19 08:01,,2007-01-27 00:00,2007-01-27 00:00,,,2006-01-03 08:00,2006-01-05 17:00,,,,,PT_Normal,,,,,6bZTVZTyQliIvLiPTxH9kw,z5oBPMxijkSmjvjbBxhLNx,,,N,0,0,,,2007-02-01 02:42,2007-02-04 01:05,hbe4678,hbe4678,,,0
2510,12458691,14517,6816088,13330,1,100,N,N,N,CP_Units,TT_Task,DT_FixedDUR2,RV_OK,TK_Complete,PK000MD106,MD305 Merc. Removal Bed - Receive Quotes,,,,0,0,0,,120,,0,0,,2006-01-11 00:00,2006-02-10 00:00,2007-06-19 08:01,2007-06-19 08:01,,2007-01-27 00:00,2007-01-27 00:00,,,2006-01-03 08:00,2006-01-23 17:00,,,,,PT_Normal,,,,,DEk9o9RoSMuAHNYLgI5w9A,8gSAPTZR4UqN5NJYkzOXSh,,,N,0,0,,,2007-02-01 02:42,2007-02-04 01:05,hbe4678,hbe4678,,,0
2511,12458692,14517,6816088,13330,1,100,N,N,N,CP_Units,TT_Task,DT_FixedDUR2,RV_OK,TK_Complete,PK000MD107,MD305 Merc. Removal Bed - Eval Bids & Issue Recmd,,,,0,0,0,0,40,0,0,0,,2006-03-01 00:00,2006-03-03 00:00,2007-06-19 08:01,2007-06-19 08:01,,2007-01-27 00:00,2007-01-27 00:00,,,2006-03-06 08:00,2006-03-10 17:00,,,,,PT_Normal,,,,,LUJ8x7UZQyiXL5cfUZ7W0Q,tGMBosELq0iI7zW1U2nmfB,,,N,0,0,,,2007-02-01 02:42,2007-02-04 01:05,hbe4678,hbe4678,,,0
2512,12458693,14517,6816088,13330,1,100,N,N,N,CP_Units,TT_Task,DT_FixedDUR2,RV_OK,TK_Complete,PK000MD108,MD305 Merc. Removal Bed - Final Negotiate/Interim Award,,,,0,0,0,0,40,0,0,0,,2006-03-03 00:00,2006-03-06 00:00,2007-06-19 08:01,2007-06-19 08:01,,2007-01-27 00:00,2007-01-27 00:00,,,2006-03-27 08:00,2006-03-31 17:00,,,,,PT_Normal,,,,,fMC9WBzVTF21qhWlX8Ix0Q,KevnnWoDJECcMdhHq/xDqx,,,N,0,0,,,2007-02-01 02:42,2007-02-04 01:05,hbe4678,hbe4678,,,0
2513,12458694,14517,6816088,13330,1,0,N,N,N,CP_Units,TT_Task,DT_FixedDUR2,RV_OK,TK_Active,PK000MD110,MD305 Merc. Removal Bed - Fabricate/PO Promise,,1256.01666666667,0,360,0,0,0,1800,0,0,0,,2006-03-06 00:00,,2007-09-05 08:01,2007-11-07 08:01,2007-03-30 17:00,2007-01-29 08:00,2007-03-30 17:00,2007-01-29 08:00,2007-03-30 17:00,2006-03-16 08:00,2007-01-24 17:00,,2007-09-05 08:01,2007-11-07 08:01,,PT_Normal,,,,,EbDtpSNVQDS9O0uazf1NqA,jiRowUMYyUOUV+KxhQ4gqh,,,N,0,0,,,2007-02-01 02:42,2007-02-04 01:00,hbe4678,hbe4678,2007-01-29 08:00,2007-03-30 17:00,360
2514,12458695,14517,6816088,13330,1,0,N,N,N,CP_Units,TT_Task,DT_FixedDUR2,RV_OK,TK_NotStart,PK000MD111,MD305 Merc. Removal Bed - Transport & Deliver,,1256.01666666667,0,320,0,0,0,400,0,0,0,,,,2007-11-14 08:01,2008-01-09 08:01,,2007-04-09 08:00,2007-06-01 17:00,2007-04-09 08:00,2007-06-01 17:00,2007-04-09 08:00,2007-06-15 17:00,,2007-11-14 08:01,2008-01-09 08:01,,PT_Normal,,,,,MWA/s+0cSWuapP2pLrHobg,amisz5SwTUG3yMFS1VOsJh,,,N,0,0,,,2007-02-01 02:42,2007-02-04 01:00,hbe4678,hbe4678,2007-04-09 08:00,2007-06-01 17:00,320
2515,12458696,14517,6816088,13330,1,100,N,N,N,CP_Units,TT_Task,DT_FixedDUR2,RV_OK,TK_Complete,PK000MD109,MD305 Merc. Removal Bed - Issue Formal P.O.,,,,0,0,0,0,80,0,0,0,,2006-03-06 00:00,2006-04-11 00:00,2007-11-07 08:01,2007-11-07 08:01,,2007-01-27 00:00,2007-01-27 00:00,,,2006-03-02 08:00,2006-03-15 17:00,,,,,PT_Normal,,,,,Kx9P4VpdQz2cn7m5bSSwfw,j043bwE52kawj0Lfw3uDFB,,,N,0,0,,,2007-02-01 02:42,2007-02-04 01:05,hbe4678,hbe4678,,,0
2516,12458697,14517,6816088,13330,1,100,N,N,N,CP_Units,TT_Task,DT_FixedDUR2,RV_OK,TK_Complete,PK000MD42N,"MD402 - Fabricate/PO Promise 104-F, 144-F",,,,0,0,0,0,1400,0,0,0,,2005-09-16 00:00,2006-07-07 00:00,2007-12-31 08:01,2007-12-31 08:01,,2007-01-27 00:00,2007-01-27 00:00,,,2005-09-12 08:00,2006-05-16 17:00,,,,,PT_Normal,,,,,ZfEhFe9/RGC20Gjf+onl8g,ztnqOyuBo0uQlL6Wdwn6Yh,,,N,0,0,,,2007-02-01 02:42,2007-02-04 01:05,hbe4678,hbe4678,,,0
2517,12458698,14517,6816088,13330,1,100,N,N,N,CP_Units,TT_Task,DT_FixedDUR2,RV_OK,TK_Complete,PK000MD42R,MD402 - Transport/Customes 104-F,,,,0,0,0,0,240,0,0,0,,2006-08-16 00:00,2006-09-14 00:00,2008-01-05 08:01,2008-01-05 08:01,,2007-01-27 00:00,2007-01-27 00:00,,,2006-10-24 08:00,2006-12-04 17:00,,,,,PT_Normal,,,,,0y4RiH3MThmcA4ul1rYByw,6SbVHTQtRESnIeybzmAQUx,,,N,0,0,,,2007-02-01 02:42,2007-02-04 01:05,hbe4678,hbe4678,,,0
2518,12458699,14517,6816088,13330,1,100,N,N,N,CP_Units,TT_Task,DT_FixedDUR2,RV_OK,TK_Complete,PK000MD42T,MD402 -Marshaling 104-F,,,,0,0,0,0,320,0,0,0,,2006-07-10 00:00,2006-08-16 00:00,2008-01-05 08:01,2008-01-05 08:01,,2007-01-27 00:00,2007-01-27 00:00,,,2006-07-17 08:00,2006-09-08 17:00,,,,,PT_Normal,,,,,XzeY9ucCTbuYGQiv5XdESg,i1LdfGityk2Wd+RNijM/Dx,,,N,0,0,,,2007-02-01 02:42,2007-02-04 01:05,hbe4678,hbe4678,,,0
2519,12458700,14517,6816088,13330,1,100,N,N,N,CP_Units,TT_Task,DT_FixedDUR2,RV_OK,TK_Complete,PK000MC23N,MC230 - Fabricate/PO Promise 111/114-C,,,,0,0,0,0,1600,0,0,0,,2005-11-09 00:00,2006-10-27 00:00,2007-06-13 08:01,2007-06-13 08:01,,2007-01-27 00:00,2007-01-27 00:00,,,2005-10-31 08:00,2006-08-08 17:00,,,,,PT_Normal,,,,,uymMUL39Tnm7D/6gSZvepg,Ean+ueVl+EK1rzqH9PSYcB,,,N,0,0,,,2007-02-01 02:42,2007-02-04 01:05,hbe4678,hbe4678,,,0
2520,12458701,14517,6816088,13330,1,100,N,N,N,CP_Units,TT_Task,DT_FixedDUR2,RV_OK,TK_Complete,PK000MC23T,MC230 - Transport/Customes 114-C,,,,0,0,0,0,240,0,0,0,,2006-11-13 08:00,2006-12-08 00:00,2008-02-02 08:01,2008-02-02 08:01,,2007-01-27 00:00,2007-01-27 00:00,,,2006-11-13 08:00,2006-12-22 17:00,,,,,PT_Normal,,,,,lYweiCmcRES9FFTMEH6+pg,XDLulqr55EG7p8AhMkUxVB,,,N,0,0,,,2007-02-01 02:42,2007-02-04 01:05,hbe4678,hbe4678,,,0
2521,12458702,14517,6816088,13330,1,100,N,N,N,CP_Units,TT_Task,DT_FixedDUR2,RV_OK,TK_Complete,PK000MC23R,MC230 - Marshaling 111/114-C,,,,0,0,0,0,320,0,0,0,2006-10-30 00:00,2006-10-30 08:00,2006-11-09 17:00,2007-06-13 08:01,2007-06-13 08:01,,2007-01-27 00:00,2007-01-27 00:00,,,2006-10-30 08:00,2006-12-22 17:00,,,,CS_MSOA,PT_Normal,,,,,rCAAPfeUTfeWJbaH2KoQhA,5ARDtg29IU+fEYnU3NEG/x,,,N,0,0,,,2007-02-01 02:42,2007-02-04 01:05,hbe4678,hbe4678,,,0
2522,12458703,14517,6816088,13330,1,100,N,N,N,CP_Units,TT_Task,DT_FixedDUR2,RV_OK,TK_Complete,PK000MC21N,MC210 - Fabricate/PO Promise 127-C,,,,0,0,0,0,1600,0,0,0,,2005-11-09 00:00,2006-07-10 00:00,2007-12-29 08:01,2007-12-29 08:01,,2007-01-27 00:00,2007-01-27 00:00,,,2005-10-31 08:00,2006-08-08 17:00,,,,,PT_Normal,,,,,BuWSULiwQWqZuJAZvP9sww,qbKpSZiTbUewUQSVZStXih,,,N,0,0,,,2007-02-01 02:42,2007-02-04 01:05,hbe4678,hbe4678,,,0
2523,12458704,14517,6816088,13330,1,100,N,N,N,CP_Units,TT_Task,DT_FixedDUR2,RV_OK,TK_Complete,PK000MC21T,MC210 - Transport/Customes 127-C,,,,0,0,0,0,240,0,0,0,,2006-08-16 00:00,2006-09-14 00:00,2007-12-29 08:01,2007-12-29 08:01,,2007-01-27 00:00,2007-01-27 00:00,,,2006-09-05 08:00,2006-10-16 17:00,,,,,PT_Normal,,,,,83hAgRBXQ5um7SqJcjSi+A,xi4LiyelTUqQQDMTrC2N3x,,,N,0,0,,,2007-02-01 02:42,2007-02-04 01:05,hbe4678,hbe4678,,,0
2524,12458705,14517,6816088,13330,1,100,N,N,N,CP_Units,TT_Task,DT_FixedDUR2,RV_OK,TK_Complete,PK000MC21R,MC210 - Marshaling 127-C,,,,0,0,0,0,320,0,0,0,,2006-07-11 00:00,2006-08-16 00:00,2007-12-29 08:01,2007-12-29 08:01,,2007-01-27 00:00,2007-01-27 00:00,,,2006-08-28 08:00,2006-10-20 17:00,,,,,PT_Normal,,,,,2ujDTzn/RiyQHoH7E7seAw,6AEwO0oca02Yg4g2dDMUIR,,,N,0,0,,,2007-02-01 02:42,2007-02-04 01:05,hbe4678,hbe4678,,,0
2525,12458706,14517,6816088,13330,1,100,N,N,N,CP_Units,TT_Task,DT_FixedDUR2,RV_OK,TK_Complete,PK020MC31G,"MC312 - (120,121-C) - Final Negotiate/Interim Award",,,,0,0,0,0,24,0,0,0,,2005-09-19 00:00,2005-09-21 00:00,2007-05-07 08:00,2007-05-07 08:00,,2007-01-27 00:00,2007-01-27 00:00,,,2005-11-01 08:00,2005-11-03 17:00,,,,,PT_Normal,,,,,J1PdlnBdRxmxZ66XUFC7Wg,1fHrLXbjg0+D2hVzTpLVDx,,,N,0,0,,,2007-02-01 02:42,2007-02-04 01:05,hbe4678,hbe4678,,,0
2526,12458707,14517,6816088,13330,1,100,N,N,N,CP_Units,TT_Task,DT_FixedDUR2,RV_OK,TK_Complete,PK000I221B,000 Everest Control Valves - Issue RFQ,,,,0,0,0,0,40,0,0,0,,2005-07-07 00:00,2005-07-07 00:00,2009-01-02 08:00,2009-01-02 08:00,,2007-01-27 00:00,2007-01-27 00:00,,,2005-09-26 08:00,2005-09-30 17:00,,,,,PT_Normal,,,,,qrW+WkoDRvaM65Q9XJQIzA,CKWBjNZa7kG8RaiMq/RMDx,,,N,0,0,,,2007-02-01 02:42,2007-02-04 01:05,hbe4678,hbe4678,,,0
2527,12458708,14517,6816088,13330,1,100,N,N,N,CP_Units,TT_Task,DT_FixedDUR2,RV_OK,TK_Complete,PK000I221C,000 Everest Control Valves - Receive Quotes,,,,0,0,0,0,120,0,0,0,,2005-07-07 00:00,2005-07-26 00:00,2009-01-02 08:00,2009-01-02 08:00,,2007-01-27 00:00,2007-01-27 00:00,,,2005-10-03 08:00,2005-10-21 17:00,,,,,PT_Normal,,,,,VDU8SJvlSEiKXwWCc7zqWA,o73k7rhH/k+HUUDMk7kGvR,,,N,0,0,,,2007-02-01 02:42,2007-02-04 01:05,hbe4678,hbe4678,,,0
2528,12458709,14517,6816088,13330,1,100,N,N,N,CP_Units,TT_Task,DT_FixedDUR2,RV_OK,TK_Complete,PK000I221E,000 Everest Control Valves - Eval Bids / Issue Recmd,,,,0,0,0,0,40,0,0,0,,2005-08-10 00:00,2005-08-31 00:00,2009-01-02 08:00,2009-01-02 08:00,,2007-01-27 00:00,2007-01-27 00:00,,,2005-10-31 08:00,2005-11-04 17:00,,,,,PT_Normal,,,,,gPgarmN7TdujtfJimPE6iA,mOLhQu/y9UGncnOyO6J1xh,,,N,0,0,,,2007-02-01 02:42,2007-02-04 01:05,hbe4678,hbe4678,,,0
2529,12458710,14517,6816088,13330,1,100,N,N,N,CP_Units,TT_Task,DT_FixedDUR2,RV_OK,TK_Complete,PK000I221G,Final Negotiation / Interim Award - Everest Control Valves,,,,0,0,0,0,80,0,0,0,,2005-08-31 00:00,2005-09-14 00:00,2009-01-02 08:00,2009-01-02 08:00,,2007-01-27 00:00,2007-01-27 00:00,,,2005-11-07 08:00,2005-11-18 17:00,,,,,PT_Normal,,,,,F4ekExH8QXO7eqIfM0I4ww,XZuBymV8/EC+xyEIhaQqwB,,,N,0,0,,,2007-02-01 02:42,2007-02-04 01:05,hbe4678,hbe4678,,,0
2530,12458711,14517,6816088,13330,1,100,N,N,N,CP_Units,TT_Task,DT_FixedDUR2,RV_OK,TK_Complete,PK000I221K,000 Everest Control Valves - Issue Formal Purchase Agreement,,,,0,0,0,0,40,0,0,0,,2005-09-14 00:00,2006-03-06 00:00,2009-01-02 08:00,2009-01-02 08:00,,2007-01-27 00:00,2007-01-27 00:00,,,2005-10-10 08:01,2005-10-17 08:01,,,,,PT_Normal,,,,,eKugy2qrQE+JRIkKpNyMBw,oUf1GtuQJEiKsNHPIAFUuh,,,N,0,0,,,2007-02-01 02:42,2007-02-04 01:05,hbe4678,hbe4678,,,0
2531,12458712,14517,6816088,13330,1,100,N,N,N,CP_Units,TT_Task,DT_FixedDUR2,RV_OK,TK_Complete,PK000IC355,DCS - ITCC / SIS / DCS - Integrated FAT,,,,0,0,0,0,80,0,0,0,,2006-12-04 08:00,2006-12-08 17:00,2007-04-16 08:00,2007-04-16 08:00,,2007-01-27 00:00,2007-01-27 00:00,,,2006-12-04 08:00,2006-12-15 17:00,,,,,PT_Normal,,,,,p1w/qh5NTsSi0Yj72DWWuA,SGWx0AXUpkKthbTM2+SvRR,,,N,0,0,,,2007-02-01 02:42,2007-02-04 01:05,hbe4678,hbe4678,,,0
2532,12458713,14517,6816088,13330,1,100,N,N,N,CP_Units,TT_Task,DT_FixedDUR2,RV_OK,TK_Complete,PK000PIA1K,Bulk Piping A/G - Fab/Exworks (CROME),,,,0,0,0,0,1520,0,0,0,,2005-10-31 08:00,2006-07-25 17:00,2007-05-12 08:01,2007-05-12 08:01,,2007-01-27 00:00,2007-01-27 00:00,,,2005-10-31 08:00,2006-07-25 17:00,,,,,PT_Normal,,,,,qD/ScQf2RuGORcibqg23MA,7NdAGUBTIkSBq3GB+wx2Sh,,,N,0,0,,,2007-02-01 02:42,2007-02-04 01:05,hbe4678,hbe4678,,,0
2533,12458714,14517,6816088,13330,1,100,N,N,N,CP_Units,TT_Task,DT_FixedDUR2,RV_OK,TK_Complete,PK000PIA1L,Bulk Piping A/G - Transport / Delivery (CROME),,,,0,0,0,0,400,0,0,0,,2006-07-26 08:00,2006-10-31 00:00,2007-05-12 08:01,2007-05-12 08:01,,2007-01-27 00:00,2007-01-27 00:00,,,2006-07-26 08:00,2006-10-03 17:00,,,,,PT_Normal,,,,,eJjU621aS621ysXZ8f6Omg,GLKw2ymyYkCQw1xztGoklB,,,N,0,0,,,2007-02-01 02:42,2007-02-04 01:05,hbe4678,hbe4678,,,0
2534,12458715,14517,6816088,13329,0,100,N,N,N,CP_Units,TT_FinMile,DT_FixedDrtn,RV_OK,TK_Complete,PK000PIA1M,Bulk Piping A/G - Receive at Site (CHROME),,,,0,0,0,0,0,0,0,0,,2006-12-29 00:00,2006-12-29 00:00,2007-05-12 08:01,2007-05-12 08:01,,2007-01-27 00:00,2007-01-27 00:00,,,2007-01-22 08:01,2007-01-22 08:01,,,,,PT_Normal,,,,,dKt6gNHJRiSpNNzPzHP7uA,VExW3hC8nEaU5Q+PMEmebR,,,N,0,0,,,2007-02-01 02:42,2007-02-04 01:05,hbe4678,hbe4678,,,0
2535,12458716,14517,6816088,13330,1,100,N,N,N,CP_Units,TT_Task,DT_FixedDUR2,RV_OK,TK_Complete,PK000PIA4A,Product Line Piping - Issue REQ/RFQ to Vend,,,,0,0,0,0,160,0,0,0,,2005-06-06 00:00,2005-06-15 00:00,2007-12-11 08:01,2007-12-11 08:01,,2007-01-27 00:00,2007-01-27 00:00,,,2005-05-11 08:00,2005-06-08 17:00,,,,,PT_Normal,,,,,xoPemW9zR4SoFD4G8jZN4A,+8VVg4O6p0eGrKbLESxZuR,,,N,0,0,,,2007-02-01 02:42,2007-02-04 01:05,hbe4678,hbe4678,,,0
2536,12458717,14517,6816088,13330,1,100,N,N,N,CP_Units,TT_Task,DT_FixedDUR2,RV_OK,TK_Complete,PK000PIA4B,Product Line Piping - Receive Bids,,,,0,0,0,0,80,0,0,0,,2005-06-16 00:00,2005-07-07 00:00,2007-12-11 08:01,2007-12-11 08:01,,2007-01-27 00:00,2007-01-27 00:00,,,2005-06-09 08:00,2005-06-22 17:00,,,,,PT_Normal,,,,,GMJ+h7i1TtCoxkiVbiMH4w,WZsLHByWEUiHS6Ug0WFT3h,,,N,0,0,,,2007-02-01 02:42,2007-02-04 01:05,hbe4678,hbe4678,,,0
2537,12458718,14517,6816088,13330,1,100,N,N,N,CP_Units,TT_Task,DT_FixedDUR2,RV_OK,TK_Complete,PK000PIA4D,Product Line Piping - Eval Bids/Issue Recmd,,,,0,0,0,0,80,0,0,0,,2005-08-04 08:00,2005-08-17 17:00,2007-12-11 08:01,2007-12-11 08:01,,2007-01-27 00:00,2007-01-27 00:00,,,2005-08-04 08:00,2005-08-17 17:00,,,,,PT_Normal,,,,,hEDnYtLeTTOF05JXRZEbCw,/N2xObZaTkqzNxykgjaHYh,,,N,0,0,,,2007-02-01 02:42,2007-02-04 01:05,hbe4678,hbe4678,,,0
2538,12458719,14517,6816088,13330,1,100,N,N,N,CP_Units,TT_Task,DT_FixedDUR2,RV_OK,TK_Complete,PK000ML50Y,Requote - ML500,,,,0,0,0,0,160,0,0,0,,2005-12-27 00:00,2006-01-10 00:00,2007-02-07 08:01,2007-02-07 08:01,,2007-01-27 00:00,2007-01-27 00:00,,,2005-05-27 08:00,2005-06-24 17:00,,,,,PT_Normal,,,,,rCcARANUSjWVIDGjqXkh6A,louk/Waz4k6kpshZZGoJAR,,,N,0,0,,,2007-02-01 02:42,2007-02-04 01:05,hbe4678,hbe4678,,,0
2539,12458720,14517,6816088,13330,1,100,N,N,N,CP_Units,TT_Task,DT_FixedDUR2,RV_OK,TK_Complete,PK000MJ34X,Eval Bids & Issue Recmd MJ304,,,,0,0,0,0,112,0,0,0,,2005-08-06 00:00,2005-10-10 00:00,2007-11-02 17:00,2007-11-02 17:00,,2007-01-27 00:00,2007-01-27 00:00,,,2005-09-13 08:00,2005-09-30 17:00,,,,,PT_Normal,,,,,e4lzQnLXSgCiVP9jZ0MQbg,Z3P02LVMQkWNwv3JtAMA+h,,,N,0,0,,,2007-02-01 02:42,2007-02-04 01:05,hbe4678,hbe4678,,,0
2540,12458721,14517,6816088,13330,1,100,N,N,N,CP_Units,TT_Task,DT_FixedDUR2,RV_OK,TK_Complete,PK000MJ33P,Issue Formal P.O. for  MJ303,,,,0,0,0,0,80,0,0,0,,2006-02-03 00:00,2006-03-06 00:00,2007-05-08 17:00,2007-05-08 17:00,,2007-01-27 00:00,2007-01-27 00:00,,,2006-01-30 08:00,2006-02-10 17:00,,,,,PT_Normal,,,,,BKBi3DEKR0GYEgS1fPDQoQ,,,,N,0,0,,,2007-02-01 02:42,2007-02-04 01:05,hbe4678,hbe4678,,,0
2541,12458722,14517,6816088,13330,1,100,N,N,N,CP_Units,TT_Task,DT_FixedDUR2,RV_OK,TK_Complete,PK000MJ33J,Final Negotiate/Interim Award - MJ303,,,,0,0,0,0,24,0,0,0,,2006-01-24 00:00,2006-02-03 00:00,2007-03-07 08:00,2007-03-07 08:00,,2007-01-27 00:00,2007-01-27 00:00,,,2006-02-09 08:00,2006-02-13 17:00,,,,,PT_Normal,,,,,JmLSklD6SoGFi+XJDFNcDA,,,,N,0,0,,,2007-02-01 02:42,2007-02-04 01:05,hbe4678,hbe4678,,,0
2542,12458723,14517,6816088,13330,1,100,N,N,N,CP_Units,TT_Task,DT_FixedDUR2,RV_OK,TK_Complete,PK000MD34Z,MD304 - Fabricate/PO Promise 108-DA/B,,,,0,0,0,0,2080,0,0,0,,2005-09-16 00:00,2006-12-05 17:00,2007-09-12 08:01,2007-09-12 08:01,,2007-01-27 00:00,2007-01-27 00:00,,,2005-09-12 08:00,2006-09-12 17:00,,,,,PT_Normal,,,,,jSlA8bm9R4CjO/3WyIXR3w,iwYde+IuTkW//8Lu/V1t8h,,,N,0,0,,,2007-02-01 02:42,2007-02-04 01:05,hbe4678,hbe4678,,,0
2543,12458724,14517,6816088,13330,1,100,N,N,N,CP_Units,TT_Task,DT_FixedDUR2,RV_OK,TK_Complete,PK000MC23A,MC230 - Fabricate/PO Promise 106-C & 109-C,,,,0,0,0,0,1600,0,0,0,,2005-11-09 00:00,2006-07-31 00:00,2007-07-02 08:01,2007-07-02 08:01,,2007-01-27 00:00,2007-01-27 00:00,,,2005-10-31 08:00,2006-08-08 17:00,,,,,PT_Normal,,,,,WYLSlTRGSGSa+tNfPwIGMg,Ean+ueVl+EK1rzqH9PSYcB,,,N,0,0,,,2007-02-01 02:42,2007-02-04 01:05,hbe4678,hbe4678,,,0
2544,12458725,14517,6816088,13330,1,100,N,N,N,CP_Units,TT_Task,DT_FixedDUR2,RV_OK,TK_Complete,PK000MC23C,MC230 - Transport/Customes 106-C & 109-C,,,,0,0,0,0,240,0,0,0,,2006-08-16 00:00,2006-09-14 00:00,2007-07-02 08:01,2007-07-02 08:01,,2007-01-27 00:00,2007-01-27 00:00,,,2006-10-16 08:00,2006-11-24 17:00,,,,,PT_Normal,,,,,OAScnrODQ7SZRz0RQoFt/A,XDLulqr55EG7p8AhMkUxVB,,,N,0,0,,,2007-02-01 02:42,2007-02-04 01:05,hbe4678,hbe4678,,,0
2545,12458726,14517,6816088,13330,1,100,N,N,N,CP_Units,TT_Task,DT_FixedDUR2,RV_OK,TK_Complete,PK000MC23B,MC230 - Marshaling 106-C & 109-C,,,,0,0,0,0,320,0,0,0,,2006-08-01 00:00,2006-08-16 00:00,2007-07-02 08:01,2007-07-02 08:01,,2007-01-27 00:00,2007-01-27 00:00,,,2006-08-21 08:00,2006-10-13 17:00,,,,,PT_Normal,,,,,1DRFaWqZThWvjv3f0o+dLA,5ARDtg29IU+fEYnU3NEG/x,,,N,0,0,,,2007-02-01 02:42,2007-02-04 01:05,hbe4678,hbe4678,,,0
2546,12458727,14517,6816088,13330,1,100,N,N,N,CP_Units,TT_Task,DT_FixedDUR2,RV_OK,TK_Complete,PK000MD42A,MD402 -Marshaling 144-F,,,,0,0,0,0,320,0,0,0,,2006-07-10 00:00,2006-08-16 00:00,2007-12-31 08:01,2007-12-31 08:01,,2007-01-27 00:00,2007-01-27 00:00,,,2006-07-17 08:00,2006-09-08 17:00,,,,,PT_Normal,,,,,JxOfm1IwQBmtyjkSD8uT5A,kBCZ/oEskkyaBBB88Gc76h,,,N,0,0,,,2007-02-01 02:42,2007-02-04 01:05,hbe4678,hbe4678,,,0
2547,12458728,14517,6816088,13330,1,0,N,N,N,CP_Units,TT_Task,DT_FixedDUR2,RV_OK,TK_NotStart,PK000I4440,FAT Test - Shelters/ Analyzers,,1288.01666666667,0,80,0,0,0,80,0,0,0,,,,2007-09-11 08:01,2007-09-25 08:01,,2007-01-29 08:00,2007-02-09 17:00,2007-01-29 08:00,2007-02-09 17:00,2007-01-29 08:00,2007-02-09 17:00,,2007-09-11 08:01,2007-09-25 08:01,,PT_Normal,,,,,vDTlBqqcSa2rb6ssKXisGg,4m3ZD6JZ4UGct4gP+MgUwh,,,N,0,0,,,2007-02-01 02:42,2007-02-04 01:00,hbe4678,hbe4678,2007-01-29 08:00,2007-02-09 17:00,80
2548,12458729,14517,6816088,13330,1,0,N,N,N,CP_Units,TT_Task,DT_FixedDUR2,RV_OK,TK_NotStart,PK000I4441,Cleanup / Changes - Shelters/ Analyzers,,1288.01666666667,0,80,0,0,0,80,0,0,0,,,,2007-09-25 08:01,2007-10-09 08:01,,2007-02-12 08:00,2007-02-23 17:00,2007-02-12 08:00,2007-02-23 17:00,2007-02-12 08:00,2007-02-23 17:00,,2007-09-25 08:01,2007-10-09 08:01,,PT_Normal,,,,,QxY4ZbAWSgOgDk4+wlVDCQ,FEE/HPuZz0+S/swu85nihx,,,N,0,0,,,2007-02-01 02:42,2007-02-04 01:00,hbe4678,hbe4678,2007-02-12 08:00,2007-02-23 17:00,80
2549,12458730,14517,6816088,13330,1,0,N,N,N,CP_Units,TT_Task,DT_FixedDUR2,RV_OK,TK_NotStart,PK000I4442,Packing / Exworks - Shelters/ Analyzers,,1288.01666666667,0,40,0,0,0,40,0,0,0,,,,2007-10-09 08:01,2007-10-16 08:01,,2007-02-26 08:00,2007-03-02 17:00,2007-02-26 08:00,2007-03-02 17:00,2007-02-26 08:00,2007-03-02 17:00,,2007-10-09 08:01,2007-10-16 08:01,,PT_Normal,,,,,+IMfIylQRfe1+7sOdCKAHQ,3kyyIyB8HUmn1kpBJ1Gvsx,,,N,0,0,,,2007-02-01 02:42,2007-02-04 01:00,hbe4678,hbe4678,2007-02-26 08:00,2007-03-02 17:00,40
2550,12458731,14517,6816088,13329,0,0,N,N,N,CP_Units,TT_Mile,DT_FixedDrtn,RV_OK,TK_NotStart,PK000I444L,Recv at Site - Shelters/ Analyzers,,1368.01666666667,752.016666666667,0,0,0,0,0,0,0,0,,,,2007-12-25 08:01,2007-12-25 08:01,,2007-05-12 08:00,2007-05-12 08:00,2007-05-12 08:00,2007-05-12 08:00,2007-05-12 08:00,2007-05-12 08:00,,2007-12-25 08:01,2007-12-25 08:01,,PT_Normal,,,,,wMCqXGzHQwGIQZUu1XSROQ,2TLg5qNiLkOTj2N9cUjSkR,,,N,0,0,,,2007-02-01 02:42,2007-02-04 01:00,hbe4678,hbe4678,2007-05-12 08:00,2007-05-12 08:00,0
2551,12458732,14517,6816088,13330,1,100,N,N,N,CP_Units,TT_Task,DT_FixedDUR2,RV_OK,TK_Complete,PK000I444H,Fabricate - Shelters/ Analyzers,,,,0,0,0,0,960,0,0,0,,2006-11-02 08:00,2006-12-29 00:00,2007-09-11 08:01,2007-09-11 08:01,,2007-01-27 00:00,2007-01-27 00:00,,,2006-11-02 08:00,2007-04-18 17:00,,,,,PT_Normal,,,,,c74bFB5gScmmX2TrsAoUFA,fSxAgScs+EGaSXTAZDoKQh,,,N,0,0,,,2007-02-01 02:42,2007-02-04 01:05,hbe4678,hbe4678,,,0
2552,12458733,14517,6816088,13330,1,0,N,N,N,CP_Units,TT_Task,DT_FixedDUR2,RV_OK,TK_NotStart,PK000I444N,Transport & Deliver - Shelters/ Analyzers,,1288.01666666667,0,400,0,0,0,400,0,0,0,,,,2007-10-16 08:01,2007-12-25 08:01,,2007-03-05 08:00,2007-05-11 17:00,2007-03-05 08:00,2007-05-11 17:00,2007-03-05 08:00,2007-05-11 17:00,,2007-10-16 08:01,2007-12-25 08:01,,PT_Normal,,,,,GxTOtgdoTDOv15cPpSU67Q,TV+pMwGcl0uJeEpSUTp9gh,,,N,0,0,,,2007-02-01 02:42,2007-02-04 01:00,hbe4678,hbe4678,2007-03-05 08:00,2007-05-11 17:00,400
2553,12458734,14517,6816088,13330,1,100,N,N,N,CP_Units,TT_Task,DT_FixedDUR2,RV_OK,TK_Complete,PK000I444B,Issue RFQ - Analyzer Shelter,,,,0,0,0,0,40,0,0,0,,2005-08-19 00:00,2005-08-25 00:00,2007-09-11 08:01,2007-09-11 08:01,,2007-01-27 00:00,2007-01-27 00:00,,,2005-09-26 08:00,2005-09-30 17:00,,,,,PT_Normal,,,,,Bdkeu5afQuuPs6oV9/IL/g,uieGK7KFc0Kjp9uHzoCNJh,,,N,0,0,,,2007-02-01 02:42,2007-02-04 01:05,hbe4678,hbe4678,,,0
2554,12458735,14517,6816088,13330,1,100,N,N,N,CP_Units,TT_Task,DT_FixedDUR2,RV_OK,TK_Complete,PK000I444C,Receive Quotes - Analyzer Shelter,,,,0,0,0,0,200,0,0,0,,2005-08-25 00:00,2005-10-14 00:00,2007-09-11 08:01,2007-09-11 08:01,,2007-01-27 00:00,2007-01-27 00:00,,,2005-10-03 08:00,2005-11-04 17:00,,,,,PT_Normal,,,,,//ntAUsqTMSqMORAqhpp2w,7iKxKwiHmkuqX6s31raojB,,,N,0,0,,,2007-02-01 02:42,2007-02-04 01:05,hbe4678,hbe4678,,,0
2555,12458736,14517,6816088,13330,1,100,N,N,N,CP_Units,TT_Task,DT_FixedDUR2,RV_OK,TK_Complete,PK000I444E,Eval Bids / Issue Recmd - Analyzer Shelter,,,,0,0,0,0,40,0,0,0,,2006-01-16 08:00,2006-01-20 00:00,2007-09-11 08:01,2007-09-11 08:01,,2007-01-27 00:00,2007-01-27 00:00,,,2006-01-16 08:00,2006-01-20 17:00,,,,,PT_Normal,,,,,gQTvzev3S6KnIJtfY2+BZw,KqFdabMY10m/vsSHXXKooh,,,N,0,0,,,2007-02-01 02:42,2007-02-04 01:05,hbe4678,hbe4678,,,0
2556,12458737,14517,6816088,13330,1,100,N,N,N,CP_Units,TT_Task,DT_FixedDUR2,RV_OK,TK_Complete,PK000I444G,Final Negotiation / Interim Award - Shelters/ Analyzers,,,,0,0,0,0,80,0,0,0,,2006-01-27 08:01,2006-03-20 00:00,2007-09-11 08:01,2007-09-11 08:01,,2007-01-27 00:00,2007-01-27 00:00,,,2006-01-27 08:01,2006-02-10 08:01,,,,,PT_Normal,,,,,3oYBv3h8SKuljlGROr6C0Q,b0ZXGm1HWUux3vzIUAa3ix,,,N,0,0,,,2007-02-01 02:42,2007-02-04 01:05,hbe4678,hbe4678,,,0
2557,12458738,14517,6816088,13330,1,100,N,N,N,CP_Units,TT_Task,DT_FixedDUR2,RV_OK,TK_Complete,PK000I444K,Issue Formal Purchase Order - Shelters/ Analyzers,,,,0,0,0,0,80,0,0,0,,2006-03-20 00:00,2006-03-20 00:00,2007-09-11 08:01,2007-09-11 08:01,,2007-01-27 00:00,2007-01-27 00:00,,,2006-05-29 08:00,2006-06-09 17:00,,,,,PT_Normal,,,,,b9e4fJaXR1S0qYxystHfWw,GJxzCrvRiUylV4jkx+adux,,,N,0,0,,,2007-02-01 02:42,2007-02-04 01:05,hbe4678,hbe4678,,,0
2558,12458739,14517,6816088,13329,0,0,N,N,N,CP_Units,TT_FinMile,DT_FixedDUR2,RV_OK,TK_NotStart,PK000I221L,000 Everest Control Valves - Recv on Site,,4640.01666666667,408.016666666667,0,0,0,0,0,0,0,0,,,,2009-02-15 08:01,2009-02-15 08:01,,2007-03-12 17:00,2007-03-12 17:00,2007-03-12 17:00,2007-03-12 17:00,2007-03-12 17:00,2007-03-12 17:00,,2009-02-15 08:01,2009-02-15 08:01,,PT_Normal,,,,,be9/hRnUQJe5GtInwb58uA,2YKHchDfbUypUeYpL/zpgR,,,N,0,0,,,2007-02-01 02:42,2007-02-04 01:00,hbe4678,hbe4678,2007-03-12 17:00,2007-03-12 17:00,0
2559,12458740,14517,6816088,13330,1,100,N,N,N,CP_Units,TT_Task,DT_FixedDUR2,RV_OK,TK_Active,PK000I221H,000 Everest Control Valves - Fabricate/Exworks,,4032,0,8,0,0,0,1600,0,0,0,,2006-03-06 00:00,,2009-01-02 08:00,2009-01-02 17:00,,2007-01-29 08:00,2007-01-29 17:00,2007-01-29 08:00,2007-01-29 17:00,2006-10-02 08:00,2007-07-06 17:00,,2009-01-02 08:00,2009-01-02 17:00,,PT_Normal,,,,,SG1DVzxNTZa8y7Xy37NNTg,kopL92TPT0WpGR5ncqePqB,,,N,0,0,,,2007-02-01 02:42,2007-02-01 02:43,hbe4678,hbe4678,2007-01-29 08:00,2007-01-29 17:00,8
2560,12458741,14517,6816088,13330,1,0,N,N,N,CP_Units,TT_Task,DT_FixedDUR2,RV_OK,TK_NotStart,PK000I221N,000 Everest Control Valves - Transport & Deliver,,4032,0,240,0,0,0,400,0,0,0,,,,2009-01-05 08:00,2009-02-13 17:00,,2007-01-30 08:00,2007-03-12 17:00,2007-01-30 08:00,2007-03-12 17:00,2007-01-30 08:00,2007-04-09 17:00,,2009-01-05 08:00,2009-02-13 17:00,,PT_Normal,,,,,FlDGoJ+/SfONNqwBtNzJVQ,rbkW2WcQfEe9GTsCreThoB,,,N,0,0,,,2007-02-01 02:42,2007-02-01 02:43,hbe4678,hbe4678,2007-01-30 08:00,2007-03-12 17:00,240
2561,12458742,14517,6816088,13330,1,100,N,N,N,CP_Units,TT_Task,DT_FixedDUR2,RV_OK,TK_Complete,PK010IC210,010 Control Valves - Fabricate/Exworks,,,,0,0,0,0,1600,0,0,0,,2006-04-28 00:00,2006-09-26 00:00,2009-02-13 17:00,2009-02-13 17:00,,2007-01-27 00:00,2007-01-27 00:00,,,2006-07-03 08:00,2007-04-06 17:00,,,,,PT_Normal,,,,,tCtAWstKRaG7qxdlrtauFA,upK8MONQfkGSKcmxPsAPKR,,,N,0,0,,,2007-02-01 02:42,2007-02-04 01:05,hbe4678,hbe4678,,,0
2562,12458743,14517,6816088,13330,1,100,N,N,N,CP_Units,TT_Task,DT_FixedDUR2,RV_OK,TK_Complete,PK030IC210,030 Control Valves - Fabricate/Exworks,,,,0,0,0,0,1600,0,0,0,,2006-04-28 00:00,2006-12-16 00:00,2009-02-15 08:01,2009-02-15 08:01,,2007-01-27 00:00,2007-01-27 00:00,,,2006-07-03 08:00,2007-04-06 17:00,,,,,PT_Normal,,,,,dnkpgJ14Sg2V2Z5lF6er0w,aYy8mF+HAUKK5NhzB6YTnh,,,N,0,0,,,2007-02-01 02:42,2007-02-04 01:05,hbe4678,hbe4678,,,0
2563,12458744,14517,6816088,13330,1,100,N,N,N,CP_Units,TT_Task,DT_FixedDUR2,RV_OK,TK_Active,PK010IC214,010 Control Valves - Transport & Deliver,,4280,0,0,0,0,0,400,0,0,0,,2006-09-27 08:00,,2009-02-13 17:00,2009-02-13 17:00,2007-01-26 17:00,2007-01-29 08:00,2007-01-29 08:00,2007-01-29 08:00,2007-01-29 08:00,2006-09-27 08:00,2006-12-05 17:00,,2009-02-13 17:00,2009-02-13 17:00,,PT_Normal,,,,,aXNZA3LoQbyTllubSkE6QQ,PAHuaU6R90WEX+AAslXW9h,,,N,0,0,,,2007-02-01 02:42,2007-02-01 02:43,hbe4678,hbe4678,2007-01-29 08:00,2007-01-29 08:00,0
2564,12458745,14517,6816088,13330,1,100,N,N,N,CP_Units,TT_Task,DT_FixedDUR2,RV_OK,TK_Complete,PK030IC214,030 Control Valves - Transport & Delivery,,,,0,0,0,0,400,0,0,0,,2006-12-04 08:00,2006-12-29 00:00,2009-02-15 08:01,2009-02-15 08:01,,2007-01-27 00:00,2007-01-27 00:00,,,2006-12-04 08:00,2007-02-09 17:00,,,,,PT_Normal,,,,,vCWMvH/xRr+tbkb9WqcR9g,lcPFc/RY102BNlcTP4Tdvx,,,N,0,0,,,2007-02-01 02:42,2007-02-04 01:05,hbe4678,hbe4678,,,0
2565,12458746,14517,6816088,13330,1,100,N,N,N,CP_Units,TT_Task,DT_FixedDUR2,RV_OK,TK_Active,PK010IC252,MOV Valves - Fabricate/Exworks,,3800,0,168,0,0,0,2080,0,0,0,,2006-06-05 00:00,,2008-11-24 08:00,2008-12-22 17:00,2007-02-26 17:00,2007-01-29 08:00,2007-02-26 17:00,2007-01-29 08:00,2007-02-26 17:00,2006-07-03 08:00,2007-06-29 17:00,,2008-11-24 08:00,2008-12-22 17:00,,PT_Normal,,,,,FiMaUA4ERryxKoKh0FtH+w,UBJTUhhV5U6DU9Mv++ZYAh,,,N,0,0,,,2007-02-01 02:42,2007-02-01 02:43,hbe4678,hbe4678,2007-01-29 08:00,2007-02-26 17:00,168
2566,12458747,14517,6816088,13330,1,0,N,N,N,CP_Units,TT_Task,DT_FixedDUR2,RV_OK,TK_Active,PK010IC262,MOV Valves - Transport & Deliver,,3800,0,280,0,0,0,400,0,0,0,,2007-01-02 08:00,,2008-12-29 08:00,2009-02-13 17:00,,2007-03-05 08:00,2007-04-20 17:00,2007-03-05 08:00,2007-04-20 17:00,2007-01-02 08:00,2007-03-12 17:00,,2008-12-29 08:00,2009-02-13 17:00,,PT_Normal,,,,,9zKBHXNES96TZ9R5PYOvvw,TSz0CRizXkSizPKQZsKuYB,,,N,0,0,,,2007-02-01 02:42,2007-02-01 02:43,hbe4678,hbe4678,2007-03-05 08:00,2007-04-20 17:00,280
2567,12458748,14517,6816088,13330,1,0,N,N,N,CP_Units,TT_Task,DT_FixedDUR2,RV_OK,TK_Active,PK030I611H,Fabricate / Exworks - Pressure Gauges - OSBL,,464,0,216,0,0,0,400,0,0,0,,2006-11-27 08:00,,2007-04-19 08:00,2007-05-25 17:00,2007-03-06 17:00,2007-01-29 08:00,2007-03-06 17:00,2007-01-29 08:00,2007-03-06 17:00,2006-11-27 08:00,2007-02-02 17:00,,2007-04-19 08:00,2007-05-25 17:00,,PT_Normal,,,,,69M367s8SdCt47Y9K+9ogg,3xWb+eOWaUSE7PGBOmUNgx,,,N,0,0,,,2007-02-01 02:42,2007-02-01 02:43,hbe4678,hbe4678,2007-01-29 08:00,2007-03-06 17:00,216
2568,12458749,14517,6816088,13330,1,0,N,N,N,CP_Units,TT_Task,DT_FixedDUR2,RV_OK,TK_NotStart,PK030I611N,Transport & Deliver - Pressure Gauges - OSBL,,584,120,120,0,0,0,400,0,0,0,,,,2007-06-18 08:00,2007-07-06 17:00,,2007-03-07 08:00,2007-03-27 17:00,2007-03-07 08:00,2007-03-27 17:00,2007-03-07 08:00,2007-05-15 17:00,,2007-06-18 08:00,2007-07-06 17:00,,PT_Normal,,,,,qAs780GzR1a6gnpFJ1U1/Q,C3FUUJasg0O9rvZYVIyz1R,,,N,0,0,,,2007-02-01 02:42,2007-02-01 02:43,hbe4678,hbe4678,2007-03-07 08:00,2007-03-27 17:00,120
2569,12458750,14517,6816088,13330,1,100,N,N,N,CP_Units,TT_Task,DT_FixedDUR2,RV_OK,TK_Complete,PK010I1210,Vortex Meters - Fabricate/Exworks,,,,0,0,0,0,440,0,0,0,,2006-05-16 08:00,2006-12-13 17:00,2009-02-12 08:00,2009-02-12 08:00,,2007-01-27 00:00,2007-01-27 00:00,,,2006-05-16 08:00,2006-07-31 17:00,,,,,PT_Normal,,,,,JHgRoXsEQFeyLwFxuN9u5A,eM8t0qDm3EKdwTdw4z/F4x,,,N,0,0,,,2007-02-01 02:42,2007-02-04 01:05,hbe4678,hbe4678,,,0
2570,12458751,14517,6816088,13330,1,0,N,N,N,CP_Units,TT_Task,DT_FixedDUR2,RV_OK,TK_Active,PK010I1211,Vortex Meters - Transport & Deliver,,4264,0,16,0,0,0,400,0,0,0,,2007-01-15 08:00,,2009-02-12 08:00,2009-02-13 17:00,2007-01-30 17:00,2007-01-29 08:00,2007-01-30 17:00,2007-01-29 08:00,2007-01-30 17:00,2007-01-15 08:00,2007-03-23 17:00,,2009-02-12 08:00,2009-02-13 17:00,,PT_Normal,,,,,73x/1G60TX+67QdUOeLHZg,N6OUd7zCH0eSzQIe/S5n7x,,,N,0,0,,,2007-02-01 02:42,2007-02-01 02:43,hbe4678,hbe4678,2007-01-29 08:00,2007-01-30 17:00,16
2571,12458752,14517,6816088,13330,1,0,N,N,N,CP_Units,TT_Task,DT_FixedDUR2,RV_OK,TK_Active,PK010I1241,Rotameters - Transport & Deliver,,4184,0,96,0,0,0,400,0,0,0,,2006-08-01 08:00,,2009-01-29 08:00,2009-02-13 17:00,,2007-01-29 08:00,2007-02-13 17:00,2007-01-29 08:00,2007-02-13 17:00,2006-08-01 08:00,2006-10-09 17:00,,2009-01-29 08:00,2009-02-13 17:00,,PT_Normal,,,,,qbLqy8YTT/WXwnCWbjUGTA,ENtjwd3SHkOv2iEjuFI9Yh,,,N,0,0,,,2007-02-01 02:42,2007-02-01 02:43,hbe4678,hbe4678,2007-01-29 08:00,2007-02-13 17:00,96
2572,12458753,14517,6816088,13329,0,0,N,N,N,CP_Units,TT_FinMile,DT_FixedDrtn,RV_OK,TK_NotStart,PK000PIA1P,Bulk Piping A/G - Receive at Site (FINAL),,447.983333333333,0,0,0,0,0,0,0,0,0,,,,2007-07-15 17:00,2007-07-15 17:00,,2007-05-12 08:01,2007-05-12 08:01,2007-05-12 08:01,2007-05-12 08:01,2007-05-12 08:01,2007-05-12 08:01,,2007-07-15 17:00,2007-07-15 17:00,,PT_Normal,,,,,TlGQRFewQByj0iBNyiun2A,S8OI51uNPU2RGpUdAPBobx,,,N,0,0,,,2007-02-01 02:42,2007-02-04 01:00,hbe4678,hbe4678,2007-05-12 08:01,2007-05-12 08:01,0
2573,12458754,14517,6816088,13330,1,100,N,N,N,CP_Units,TT_Task,DT_FixedDUR2,RV_OK,TK_Complete,PK010I1240,Rotameters - Fabricate/Exworks,,,,0,0,0,0,640,0,0,0,,2005-11-30 00:00,2006-07-28 00:00,2009-01-29 08:00,2009-01-29 08:00,,2007-01-27 00:00,2007-01-27 00:00,,,2006-11-30 08:00,2007-03-21 17:00,,,,,PT_Normal,,,,,dw10vuB0Q9K+p5UhfdCBsw,ZnfFf1Pq502ld1RJkc/j6R,,,N,0,0,,,2007-02-01 02:42,2007-02-04 01:05,hbe4678,hbe4678,,,0
2574,12458755,14517,6816088,13330,1,0,N,N,N,CP_Units,TT_Task,DT_FixedDUR2,RV_OK,TK_Active,PK030I131H,Fabricate / Exworks -  Transmitters - Temp.,,568,0,112,0,0,0,496,0,0,0,2006-12-11 00:00,2006-09-28 08:00,,2007-05-08 08:00,2007-05-25 17:00,2007-02-15 17:00,2007-01-29 08:00,2007-02-15 17:00,2007-01-29 08:00,2007-02-15 17:00,2006-09-28 08:00,2006-12-22 17:00,,2007-05-08 08:00,2007-05-25 17:00,CS_MSOA,PT_Normal,,,,,ZQqiWtejQiCELDZgUcYDOg,fSxAgScs+EGaSXTAZDoKQh,,,N,0,0,,,2007-02-01 02:42,2007-02-01 02:43,hbe4678,hbe4678,2007-01-29 08:00,2007-02-15 17:00,112
2575,12458756,14517,6816088,13330,1,0,N,N,N,CP_Units,TT_Task,DT_FixedDUR2,RV_OK,TK_NotStart,PK030I131N,Transport & Deliver - Transmitters - Temp.,,728,168,80,0,0,0,400,0,0,0,,,,2007-06-25 08:00,2007-07-06 17:00,,2007-02-16 08:00,2007-03-01 17:00,2007-02-16 08:00,2007-03-01 17:00,2007-02-16 08:00,2007-04-26 17:00,,2007-06-25 08:00,2007-07-06 17:00,,PT_Normal,,,,,RP1U9teaRie9qmWK5GH+Dg,TV+pMwGcl0uJeEpSUTp9gh,,,N,0,0,,,2007-02-01 02:42,2007-02-01 02:43,hbe4678,hbe4678,2007-02-16 08:00,2007-03-01 17:00,80
2576,12458757,14517,6816088,13330,1,100,N,N,N,CP_Units,TT_Task,DT_FixedDUR2,RV_OK,TK_Complete,PK010I1100,010 Orific Plates - Fabricate/Exworks,,,,0,0,0,0,520,0,0,0,,2006-05-22 08:00,2006-08-02 17:00,2009-02-15 08:01,2009-02-15 08:01,,2007-01-27 00:00,2007-01-27 00:00,,,2006-05-22 08:00,2006-08-18 17:00,,,,,PT_Normal,,,,,sXnM7oTZQ/2gkiIuCbXj+g,tNgWRGFeNU67BEv4CwAvNh,,,N,0,0,,,2007-02-01 02:42,2007-02-04 01:05,hbe4678,hbe4678,,,0
2577,12458758,14517,6816088,13330,1,100,N,N,N,CP_Units,TT_Task,DT_FixedDUR2,RV_OK,TK_Complete,PK030I1100,Orific Plates - Fabricate/Exworks,,,,0,0,0,0,520,0,0,0,,2006-11-02 08:00,2007-01-09 00:00,2009-01-16 08:00,2009-01-16 08:00,,2007-01-27 00:00,2007-01-27 00:00,,,2006-11-02 08:00,2007-01-31 17:00,,,,,PT_Normal,,,,,0wqVZ5FaQHqD8Af76uZxfg,LY/LwZFzYkqmZLPeirkZ1R,,,N,0,0,,,2007-02-01 02:42,2007-02-04 01:05,hbe4678,hbe4678,,,0
2578,12458759,14517,6816088,13330,1,100,N,N,N,CP_Units,TT_Task,DT_FixedDUR2,RV_OK,TK_Complete,PK010I1103,010 Orific Plates - Transport & Deliver,,,,0,0,0,0,400,0,0,0,,2006-08-03 08:00,2006-12-07 00:00,2009-02-15 08:01,2009-02-15 08:01,,2007-01-27 00:00,2007-01-27 00:00,,,2006-08-03 08:00,2006-10-11 17:00,,,,,PT_Normal,,,,,yRJxNh4tSQ+64UqaUlM9Hw,CfPqOeNlqk6JuTbM1LyzAh,,,N,0,0,,,2007-02-01 02:42,2007-02-04 01:05,hbe4678,hbe4678,,,0
2579,12458760,14517,6816088,13330,1,0,N,N,N,CP_Units,TT_Task,DT_FixedDUR2,RV_OK,TK_NotStart,PK030I1103,Orific Plates -Transport & Deliver,,4112,0,168,0,0,0,400,0,0,0,,,,2009-01-16 08:00,2009-02-13 17:00,,2007-01-29 08:00,2007-02-26 17:00,2007-01-29 08:00,2007-02-26 17:00,2007-01-29 08:00,2007-04-06 17:00,,2009-01-16 08:00,2009-02-13 17:00,,PT_Normal,,,,,RssO8w+bQaeny8LHNEwhVQ,pZXUg+O4J0C8eNzmZxL5xh,,,N,0,0,,,2007-02-01 02:42,2007-02-01 02:43,hbe4678,hbe4678,2007-01-29 08:00,2007-02-26 17:00,168
2580,12458761,14517,6816088,13330,1,0,N,N,N,CP_Units,TT_Task,DT_FixedDUR2,RV_OK,TK_Active,PK010I1150,Annubars - Fabricate/Exworks,,4072,0,8,0,0,0,440,0,0,0,,2005-11-30 08:00,,2009-01-09 08:00,2009-01-09 17:00,,2007-01-29 08:00,2007-01-29 17:00,2007-01-29 08:00,2007-01-29 17:00,2005-11-30 08:00,2006-02-16 17:00,,2009-01-09 08:00,2009-01-09 17:00,,PT_Normal,,,,,WFKimA1LQAugQuAbp/cifg,XwkquQxmgE680a4TK6ds0B,,,N,0,0,,,2007-02-01 02:42,2007-02-01 02:43,hbe4678,hbe4678,2007-01-29 08:00,2007-01-29 17:00,8
2581,12458762,14517,6816088,13330,1,0,N,N,N,CP_Units,TT_Task,DT_FixedDUR2,RV_OK,TK_NotStart,PK010I1151,Annubars - Transport & Deliver,,4072,0,200,0,0,0,400,0,0,0,,,,2009-01-12 08:00,2009-02-13 17:00,,2007-01-30 08:00,2007-03-05 17:00,2007-01-30 08:00,2007-03-05 17:00,2007-01-30 08:00,2007-04-09 17:00,,2009-01-12 08:00,2009-02-13 17:00,,PT_Normal,,,,,KXnbkFaAR9CQ4fgWjeMOgA,VWfl8i0W6UujAIJt57TTwR,,,N,0,0,,,2007-02-01 02:42,2007-02-01 02:43,hbe4678,hbe4678,2007-01-30 08:00,2007-03-05 17:00,200
2582,12458763,14517,6816088,13330,1,100,N,N,N,CP_Units,TT_Task,DT_FixedDUR2,RV_OK,TK_Complete,PK000PS00E,000 SP Items - Final Negotiation / Interim Award,,,,0,0,0,0,80,0,0,0,,2006-03-22 00:00,2006-06-15 17:00,2008-01-09 08:01,2008-01-09 08:01,,2007-01-27 00:00,2007-01-27 00:00,,,2006-04-03 08:00,2006-04-14 17:00,,,,,PT_Normal,,,,,XqZQEQ/vRCyTI/SRzZIeBg,NZ/cmXvjsUePLy8ax5AFmR,,,N,0,0,,,2007-02-01 02:42,2007-02-04 01:05,hbe4678,hbe4678,,,0
2583,12458764,14517,6816088,13329,0,0,N,N,N,CP_Units,TT_FinMile,DT_FixedDUR2,RV_OK,TK_NotStart,PK000I9000,Receive Instruments at Site,,4232,0,0,0,0,0,0,0,0,0,,,,2009-02-15 08:01,2009-02-15 08:01,,2007-05-12 08:01,2007-05-12 08:01,2007-05-12 08:01,2007-05-12 08:01,2007-05-12 08:01,2007-05-12 08:01,,2009-02-15 08:01,2009-02-15 08:01,,PT_Normal,,,,,VuugVCXWRLasApwcRzCVPA,BPJtspmZtkO7Ah0T0Fqynh,,,N,0,0,,,2007-02-01 02:42,2007-02-04 01:00,hbe4678,hbe4678,2007-05-12 08:01,2007-05-12 08:01,0
2584,12458765,14517,6816088,13329,0,0,N,N,N,CP_Units,TT_FinMile,DT_FixedDUR2,RV_OK,TK_NotStart,PK000PSA8J,000 Relief Valves - Recv on Site,,2272.01666666667,1600,0,0,0,0,0,0,0,0,,,,2008-03-20 08:01,2008-03-20 08:01,,2007-03-26 17:00,2007-03-26 17:00,2007-03-26 17:00,2007-03-26 17:00,2007-03-26 17:00,2007-03-26 17:00,,2008-03-20 08:01,2008-03-20 08:01,,PT_Normal,,,,,hNwZeTApTdG7f6rMECy0Cw,t3qvfZMasEqy8yAt0quC9R,,,N,0,0,,,2007-02-01 02:42,2007-02-04 01:00,hbe4678,hbe4678,2007-03-26 17:00,2007-03-26 17:00,0
2585,12458766,14517,6816088,13330,1,100,N,N,N,CP_Units,TT_Task,DT_FixedDUR2,RV_OK,TK_Active,PK000PSA8G,000 Relief Valves - Fabricate/Exworks,,2056.01666666667,0,0,0,0,0,1040,0,0,0,,2005-10-28 00:00,,2008-01-23 08:01,2008-01-23 08:01,2006-09-26 17:00,2007-01-29 08:00,2007-01-29 08:00,2007-01-29 08:00,2007-01-29 08:00,2006-02-27 08:00,2006-08-25 17:00,,2008-01-23 08:01,2008-01-23 08:01,,PT_Normal,,,,,b6W8vq5zQ92pwLJ76UssNQ,DqaNT0VOlkKw2wGS9YA6KB,,,N,0,0,,,2007-02-01 02:42,2007-02-04 01:00,hbe4678,hbe4678,2007-01-29 08:00,2007-01-29 08:00,0
2586,12458767,14517,6816088,13330,1,0,N,N,N,CP_Units,TT_Task,DT_FixedDUR2,RV_OK,TK_NotStart,PK000PSA8H,000 Relief Valves - Transport & Deliver,,2056.01666666667,0,328,0,0,0,400,0,0,0,,,,2008-01-23 08:01,2008-03-20 08:01,,2007-01-29 08:00,2007-03-26 17:00,2007-01-29 08:00,2007-03-26 17:00,2007-01-29 08:00,2007-04-06 17:00,,2008-01-23 08:01,2008-03-20 08:01,,PT_Normal,,,,,Ns3Ov7ROQSGU1ZGdLyS3pA,AbeWGHyJUkelBpjXOxNDoh,,,N,0,0,,,2007-02-01 02:42,2007-02-04 01:00,hbe4678,hbe4678,2007-01-29 08:00,2007-03-26 17:00,328
2587,12458768,14517,6816088,13330,1,100,N,N,N,CP_Units,TT_Task,DT_FixedDUR2,RV_OK,TK_Complete,PK000PSA8A,000 Relief Valves - Issue RFQ,,,,0,0,0,0,40,0,0,0,,2005-05-05 00:00,2005-05-11 00:00,2008-01-23 08:01,2008-01-23 08:01,,2007-01-27 00:00,2007-01-27 00:00,,,2006-02-27 08:00,2006-03-03 17:00,,,,,PT_Normal,,,,,5iHF+VJ3Qm2MJImp3iB09A,CKWBjNZa7kG8RaiMq/RMDx,,,N,0,0,,,2007-02-01 02:42,2007-02-04 01:05,hbe4678,hbe4678,,,0
2588,12458769,14517,6816088,13330,1,100,N,N,N,CP_Units,TT_Task,DT_FixedDUR2,RV_OK,TK_Complete,PK000PSA8B,000 Relief Valves - Receive Quotes,,,,0,0,0,0,120,0,0,0,,2005-05-11 00:00,2005-07-21 00:00,2008-01-23 08:01,2008-01-23 08:01,,2007-01-27 00:00,2007-01-27 00:00,,,2006-03-06 08:00,2006-03-24 17:00,,,,,PT_Normal,,,,,XBoXKmrGQ8q0KIaDz4sYrg,o73k7rhH/k+HUUDMk7kGvR,,,N,0,0,,,2007-02-01 02:42,2007-02-04 01:05,hbe4678,hbe4678,,,0
2589,12458770,14517,6816088,13330,1,100,N,N,N,CP_Units,TT_Task,DT_FixedDUR2,RV_OK,TK_Complete,PK000PSA8D,000 Relief Valves - Eval Bids / Issue Recmd,,,,0,0,0,0,40,0,0,0,,2005-07-21 00:00,2005-10-27 00:00,2008-01-23 08:01,2008-01-23 08:01,,2007-01-27 00:00,2007-01-27 00:00,,,2006-02-27 08:00,2006-03-03 17:00,,,,,PT_Normal,,,,,msHzPhf4ShibmXdmgF8JsA,mOLhQu/y9UGncnOyO6J1xh,,,N,0,0,,,2007-02-01 02:42,2007-02-04 01:05,hbe4678,hbe4678,,,0
2590,12458771,14517,6816088,13330,1,100,N,N,N,CP_Units,TT_Task,DT_FixedDUR2,RV_OK,TK_Complete,PK000PSA8E,000 Relief Valves - Final Negotiation / Interim Award,,,,0,0,0,0,80,0,0,0,,2005-10-27 00:00,2005-10-28 00:00,2008-01-23 08:01,2008-01-23 08:01,,2007-01-27 00:00,2007-01-27 00:00,,,2006-03-06 08:00,2006-03-17 17:00,,,,,PT_Normal,,,,,53k7/gohRCuH9A5WIuGYBA,XZuBymV8/EC+xyEIhaQqwB,,,N,0,0,,,2007-02-01 02:42,2007-02-04 01:05,hbe4678,hbe4678,,,0
2591,12458772,14517,6816088,13330,1,100,N,N,N,CP_Units,TT_Task,DT_FixedDUR2,RV_OK,TK_Complete,PK000PSA8F,000 Relief Valves - Issue Formal Blanket P.O.,,,,0,0,0,0,40,0,0,0,,2005-10-28 00:00,2006-01-20 00:00,2008-01-23 08:01,2008-01-23 08:01,,2007-01-27 00:00,2007-01-27 00:00,,,2006-03-20 08:00,2006-03-24 17:00,,,,,PT_Normal,,,,,NirvtWujSLqdQhra3Eho9w,oUf1GtuQJEiKsNHPIAFUuh,,,N,0,0,,,2007-02-01 02:42,2007-02-04 01:05,hbe4678,hbe4678,,,0
2592,12458773,14517,6816088,13330,1,0,N,N,N,CP_Units,TT_Task,DT_FixedDUR2,RV_OK,TK_Active,PK000PS00G,000 SP Items - Fabricate/Exworks,,1976.01666666667,0,8,0,0,0,560,0,0,0,,2006-07-14 00:00,,2008-01-09 08:01,2008-01-10 08:01,,2007-01-29 08:00,2007-01-29 17:00,2007-01-29 08:00,2007-01-29 17:00,2006-07-31 08:00,2006-11-03 17:00,,2008-01-09 08:01,2008-01-10 08:01,,PT_Normal,,,,,Z7LaqogLQbKfoxPTRYEfCw,3AIh0JabaUmFAd4lQN9rvx,,,N,0,0,,,2007-02-01 02:42,2007-02-04 01:00,hbe4678,hbe4678,2007-01-29 08:00,2007-01-29 17:00,8
2593,12458774,14517,6816088,13330,1,0,N,N,N,CP_Units,TT_Task,DT_FixedDUR2,RV_OK,TK_NotStart,PK000PS00H,000 SP Items - Transport & Deliver,,1976.01666666667,0,400,0,0,0,400,0,0,0,,,,2008-01-10 08:01,2008-03-20 08:01,,2007-01-30 08:00,2007-04-09 17:00,2007-01-30 08:00,2007-04-09 17:00,2007-01-30 08:00,2007-04-09 17:00,,2008-01-10 08:01,2008-03-20 08:01,,PT_Normal,,,,,T5sCpehsTguPq3zaxRnlZQ,qzJvnLDbbE2bp63y/FnG5x,,,N,0,0,,,2007-02-01 02:42,2007-02-04 01:00,hbe4678,hbe4678,2007-01-30 08:00,2007-04-09 17:00,400
2594,12458775,14517,6816088,13330,1,100,N,N,N,CP_Units,TT_Task,DT_FixedDUR2,RV_OK,TK_Complete,PK000PIA4E,Product Line Piping - Final Negotiation/Interim Award,,,,0,0,0,0,80,0,0,0,,2005-09-09 00:00,2005-10-14 00:00,2007-12-11 08:01,2007-12-11 08:01,,2007-01-27 00:00,2007-01-27 00:00,,,2005-09-26 08:00,2005-10-07 17:00,,,,,PT_Normal,,,,,zNy8Ah23QgOFG/st0KabRg,odevwR0luk2W/BqcZMYqzx,,,N,0,0,,,2007-02-01 02:42,2007-02-04 01:05,hbe4678,hbe4678,,,0
2595,12458776,14517,6816088,13330,1,100,N,N,N,CP_Units,TT_Task,DT_FixedDUR2,RV_OK,TK_Complete,PK000PIA4F,Product Line Piping - Formal Award,,,,0,0,0,0,80,0,0,0,,2005-10-14 00:00,2005-11-02 00:00,2007-12-11 08:01,2007-12-11 08:01,,2007-01-27 00:00,2007-01-27 00:00,,,2005-10-10 08:00,2005-10-21 17:00,,,,,PT_Normal,,,,,tTUDPa3gRcuKos0taqMs/w,obvMXCpTgESfL9QBMrwmhx,,,N,0,0,,,2007-02-01 02:42,2007-02-04 01:05,hbe4678,hbe4678,,,0
2596,12458777,14517,6816088,13330,1,100,N,N,N,CP_Units,TT_Task,DT_FixedDUR2,RV_OK,TK_Complete,PK000PIA4G,Product Line Piping - Fab/Exworks +/- 5700 Mts.,,,,0,0,0,0,1040,0,0,0,,2005-10-31 08:00,2006-07-03 00:00,2007-12-11 08:01,2007-12-11 08:01,,2007-01-27 00:00,2007-01-27 00:00,,,2005-10-31 08:00,2006-05-02 17:00,,,,,PT_Normal,,,,,f3mxr1JDRXemHdWQ/OY/lw,7NdAGUBTIkSBq3GB+wx2Sh,,,N,0,0,,,2007-02-01 02:42,2007-02-04 01:05,hbe4678,hbe4678,,,0
2597,12458778,14517,6816088,13330,1,100,N,N,N,CP_Units,TT_Task,DT_FixedDUR2,RV_OK,TK_Complete,PK000PIA4H,Product Line Piping - Transport / Delivery to Insulation Shop,,,,0,0,0,0,160,0,0,0,,2006-07-03 00:00,2006-07-24 00:00,2007-12-11 08:01,2007-12-11 08:01,,2007-01-27 00:00,2007-01-27 00:00,,,2007-03-19 08:00,2007-04-13 17:00,,,,,PT_Normal,,,,,cGcfI61STdyAKHh5uK+Xag,GLKw2ymyYkCQw1xztGoklB,,,N,0,0,,,2007-02-01 02:42,2007-02-04 01:05,hbe4678,hbe4678,,,0
2598,12458779,14517,6816088,13330,1,100,N,N,N,CP_Units,TT_Task,DT_FixedDUR2,RV_OK,TK_Complete,PK000PIA4I,Product Line Piping - Insulation Fab/Exworks,,,,0,0,0,0,240,0,0,0,,2006-07-25 00:00,2006-08-31 00:00,2007-12-11 08:01,2007-12-11 08:01,,2007-01-27 00:00,2007-01-27 00:00,,,2007-04-03 08:00,2007-05-14 17:00,,,,,PT_Normal,,,,,wNoL8F2vTYqb93xO6LkwZg,g7baKpSpkEmQrfcCOq3uFx,,,N,0,0,,,2007-02-01 02:42,2007-02-04 01:05,hbe4678,hbe4678,,,0
2599,12458780,14517,6816088,13330,1,100,N,N,N,CP_Units,TT_Task,DT_FixedDUR2,RV_OK,TK_Complete,PK000PIA4K,Product Line Piping - Transport / Delivery,,,,0,0,0,0,400,0,0,0,,2006-08-01 00:00,2006-08-31 00:00,2007-12-11 08:01,2007-12-11 08:01,,2007-01-27 00:00,2007-01-27 00:00,,,2007-06-12 08:00,2007-08-20 17:00,,,,,PT_Normal,,,,,ORCPA9FzT7qAADhMs6oH/w,oUZRNSzQ60eGVaxhtul3IR,,,N,0,0,,,2007-02-01 02:42,2007-02-04 01:05,hbe4678,hbe4678,,,0
2600,12458781,14517,6816088,13329,0,100,N,N,N,CP_Units,TT_FinMile,DT_FixedDrtn,RV_OK,TK_Complete,PK000PIA4J,Product Line Piping - Receive at Site,,,,0,0,0,0,0,0,0,0,,2006-08-31 00:00,2006-08-31 00:00,2007-12-11 08:01,2007-12-11 08:01,,2007-01-27 00:00,2007-01-27 00:00,,,2007-08-20 17:00,2007-08-20 17:00,,,,,PT_Normal,,,,,m6LyDgQ1QTaFcLhefSfqVw,S8OI51uNPU2RGpUdAPBobx,,,N,0,0,,,2007-02-01 02:42,2007-02-04 01:05,hbe4678,hbe4678,,,0
2601,12458782,14517,6816088,13330,1,0,N,N,N,CP_Units,TT_Task,DT_FixedDUR2,RV_OK,TK_NotStart,PK000PIA1N,Bulk Piping A/G - Fab/Exworks (FINAL),,360,0,400,0,0,0,400,0,0,0,,,,2007-04-02 08:00,2007-06-08 17:00,,2007-01-29 08:00,2007-04-06 17:00,2007-01-29 08:00,2007-04-06 17:00,2007-01-29 08:00,2007-04-06 17:00,,2007-04-02 08:00,2007-06-08 17:00,,PT_Normal,,,,,KXhbbnoiQBivatKpJa07aA,g7baKpSpkEmQrfcCOq3uFx,,,N,0,0,,,2007-02-01 02:42,2007-02-01 02:43,hbe4678,hbe4678,2007-01-29 08:00,2007-04-06 17:00,400
2602,12458783,14517,6816088,13330,1,0,N,N,N,CP_Units,TT_Task,DT_FixedDUR2,RV_OK,TK_NotStart,PK000PIA1O,Bulk Piping A/G - Transport / Delivery (FINAL),,360,0,200,0,0,0,200,0,0,0,,,,2007-06-11 08:00,2007-07-13 17:00,,2007-04-09 08:00,2007-05-11 17:00,2007-04-09 08:00,2007-05-11 17:00,2007-04-09 08:00,2007-05-11 17:00,,2007-06-11 08:00,2007-07-13 17:00,,PT_Normal,,,,,pyfqLPXZQomOrfaR0lvXYA,oUZRNSzQ60eGVaxhtul3IR,,,N,0,0,,,2007-02-01 02:42,2007-02-01 02:43,hbe4678,hbe4678,2007-04-09 08:00,2007-05-11 17:00,200
2603,12458784,14517,6816088,13330,1,100,N,N,N,CP_Units,TT_Task,DT_FixedDUR2,RV_OK,TK_Complete,PK000IC351,DCS - Vendor Provides Software & Workstations,,,,0,0,0,0,160,0,0,0,,2005-12-15 00:00,2005-12-30 00:00,2007-04-16 08:00,2007-04-16 08:00,,2007-01-27 00:00,2007-01-27 00:00,,,2005-12-19 08:00,2006-01-17 17:00,,,,,PT_Normal,,,,,Avq/jW0ATcCRMO0NdSmGbA,,,,N,0,0,,,2007-02-01 02:42,2007-02-04 01:05,hbe4678,hbe4678,,,0
2604,12458785,14517,6816088,13330,1,100,N,N,N,CP_Units,TT_Task,DT_FixedDUR2,RV_OK,TK_Complete,PK000IC352,DCS - FAT Test,,,,0,0,0,0,120,0,0,0,,2006-10-31 08:00,2006-12-01 00:00,2007-04-16 08:00,2007-04-16 08:00,,2007-01-27 00:00,2007-01-27 00:00,,,2006-10-31 08:00,2006-11-20 17:00,,,,,PT_Normal,,,,,PfxliKCyTem1N97y5zIwjg,,,,N,0,0,,,2007-02-01 02:42,2007-02-04 01:05,hbe4678,hbe4678,,,0
2605,12458786,14517,6816088,13330,1,100,N,N,N,CP_Units,TT_Task,DT_FixedDUR2,RV_OK,TK_Complete,PK000IC353,DCS - Cleanup / Changes,,,,0,0,0,0,80,0,0,0,2006-11-30 00:00,2006-12-01 08:00,2006-12-01 17:00,2007-05-25 17:00,2007-05-25 17:00,,2007-01-27 00:00,2007-01-27 00:00,,,2006-12-01 08:00,2006-12-14 17:00,,,,CS_MSOA,PT_Normal,,,,,fUs7+6TNQEqvyla2eizZzA,,,,N,0,0,,,2007-02-01 02:42,2007-02-04 01:05,hbe4678,hbe4678,,,0
2606,12458787,14517,6816088,13330,1,0,N,N,N,CP_Units,TT_Task,DT_FixedDUR2,RV_OK,TK_Active,PK000IC354,DCS - Packing / Exworks,,680,0,0,0,0,0,40,0,0,0,,2006-12-11 08:00,,2007-05-25 17:00,2007-05-25 17:00,2007-01-26 17:00,2007-01-29 08:00,2007-01-29 08:00,2007-01-29 08:00,2007-01-29 08:00,2006-12-11 08:00,2006-12-15 17:00,,2007-05-25 17:00,2007-05-25 17:00,,PT_Normal,,,,,F4HJfn3wRwG9hj1qmhnDNQ,,,,N,0,0,,,2007-02-01 02:42,2007-02-01 02:43,hbe4678,hbe4678,2007-01-29 08:00,2007-01-29 08:00,0
2607,12458788,14517,6816088,13330,1,100,N,N,N,CP_Units,TT_Task,DT_FixedDUR2,RV_OK,TK_Complete,PK000I352B,SIS - Inquiry REQ/RFQ,,,,0,0,0,0,40,0,0,0,,2005-09-02 00:00,2005-09-07 00:00,2007-04-16 08:00,2007-04-16 08:00,,2007-01-27 00:00,2007-01-27 00:00,,,2005-09-29 08:00,2005-10-05 17:00,,,,,PT_Normal,,,,,Zi6hUra6QX2GR+r/abuMRA,LZwZmN+1Fk+EPGYKHkkMih,,,N,0,0,,,2007-02-01 02:42,2007-02-04 01:05,hbe4678,hbe4678,,,0
2608,12458789,14517,6816088,13330,1,100,N,N,N,CP_Units,TT_Task,DT_FixedDUR2,RV_OK,TK_Complete,PK000I352C,SIS - Receive Bids,,,,0,0,0,0,120,0,0,0,,2005-09-07 00:00,2005-09-21 00:00,2007-04-16 08:00,2007-04-16 08:00,,2007-01-27 00:00,2007-01-27 00:00,,,2005-10-06 08:00,2005-10-26 17:00,,,,,PT_Normal,,,,,16JbLbfAR+qAOgCY5P34RQ,S3yMJIbD/EKdqzxcjQRHUh,,,N,0,0,,,2007-02-01 02:42,2007-02-04 01:05,hbe4678,hbe4678,,,0
2609,12458790,14517,6816088,13330,1,100,N,N,N,CP_Units,TT_Task,DT_FixedDUR2,RV_OK,TK_Complete,PK000I352E,SIS - Eval Bids/Issue Recmd,,,,0,0,0,0,40,0,0,0,,2005-11-03 00:00,2006-01-27 17:00,2007-04-16 08:00,2007-04-16 08:00,,2007-01-27 00:00,2007-01-27 00:00,,,2005-11-17 08:00,2005-11-23 17:00,,,,,PT_Normal,,,,,+rsxI2ilTj66U92bDBlK1g,2nPJjgQLW0ChU0kEnie0vB,,,N,0,0,,,2007-02-01 02:42,2007-02-04 01:05,hbe4678,hbe4678,,,0
2610,12458791,14517,6816088,13330,1,100,N,N,N,CP_Units,TT_Task,DT_FixedDUR2,RV_OK,TK_Complete,PK000I352G,SIS - Interim Award,,,,0,0,0,0,40,0,0,0,,2006-01-20 00:00,2006-02-20 00:00,2007-04-16 08:00,2007-04-16 08:00,,2007-01-27 00:00,2007-01-27 00:00,,,2006-01-30 08:01,2006-02-06 08:01,,,,,PT_Normal,,,,,zcC+LSlEQfGle+vMMnl8fg,ZsdVzXFCpE67fMxwlUTSoh,,,N,0,0,,,2007-02-01 02:42,2007-02-04 01:05,hbe4678,hbe4678,,,0
2611,12458792,14517,6816088,13330,1,100,N,N,N,CP_Units,TT_Task,DT_FixedDUR2,RV_OK,TK_Complete,PK000I352H,SIS - Fabricate Hardware,,,,0,0,0,0,480,0,0,0,,2006-03-13 00:00,2006-09-22 00:00,2007-04-16 08:00,2007-04-16 08:00,,2007-01-27 00:00,2007-01-27 00:00,,,2006-10-02 08:00,2006-12-22 17:00,,,,,PT_Normal,,,,,fNwPiHKYSPWPoob4duIwrg,Kz8v4SLZuUGZUENyis0q8h,,,N,0,0,,,2007-02-01 02:42,2007-02-04 01:05,hbe4678,hbe4678,,,0
2612,12458793,14517,6816088,13330,1,100,N,N,N,CP_Units,TT_Task,DT_FixedDUR2,RV_OK,TK_Complete,PK000MB64S,MB640 - Marshaling 101-B Springs & Hangers,,,,0,0,0,0,320,0,0,0,,2006-08-08 00:00,2006-08-16 00:00,2008-03-01 08:01,2008-03-01 08:01,,2007-01-27 00:00,2007-01-27 00:00,,,2006-08-07 08:00,2006-09-29 17:00,,,,,PT_Normal,,,,,9iH3AxhiQsmYTu4oRN78qg,GlhOkBaaHEyrJHxrsh//sB,,,N,0,0,,,2007-02-01 02:42,2007-02-04 01:05,hbe4678,hbe4678,,,0
2613,12458794,14517,6816088,13330,1,100,N,N,N,CP_Units,TT_Task,DT_FixedDUR2,RV_OK,TK_Complete,PK000MB66S,MB660 - Marshaling 101-B Dampers & Air Doors,,,,0,0,0,0,320,0,0,0,,2006-09-28 00:00,2006-09-28 00:00,2008-03-29 08:01,2008-03-29 08:01,,2007-01-27 00:00,2007-01-27 00:00,,,2006-09-29 08:00,2006-11-23 17:00,,,,,PT_Normal,,,,,L6i+tWSnQYmq/8lFQVLIOw,szG0JxjXIU2WsKOnpdqwfR,,,N,0,0,,,2007-02-01 02:42,2007-02-04 01:05,hbe4678,hbe4678,,,0
2614,12458795,14517,6816088,13330,1,100,N,N,N,CP_Units,TT_Task,DT_FixedDUR2,RV_OK,TK_Complete,PK000MB69S,MB691 - Marshaling 101-B for MB691,,,,0,0,0,0,320,0,0,0,,2006-08-07 00:00,2006-09-07 00:00,2008-02-16 08:01,2008-02-16 08:01,,2007-01-27 00:00,2007-01-27 00:00,,,2006-08-14 08:00,2006-10-06 17:00,,,,,PT_Normal,,,,,ZpfSMrmXRNGeEkIeo8YJsQ,RLeTewZVS06pYsyMpO/mLx,,,N,0,0,,,2007-02-01 02:42,2007-02-04 01:05,hbe4678,hbe4678,,,0
2615,12458796,14517,6816088,13330,1,100,N,N,N,CP_Units,TT_Task,DT_FixedDUR2,RV_OK,TK_Complete,PK000MB68S,MB692 - Marshaling 101-B Cat Vacuum Equip.,,,,0,0,0,0,320,0,0,0,,2006-06-05 00:00,2006-08-16 00:00,2008-04-12 08:01,2008-04-12 08:01,,2007-01-27 00:00,2007-01-27 00:00,,,2006-06-27 08:00,2006-08-21 17:00,,,,,PT_Normal,,,,,DB3kc9VfQ+2eQ3wCCg2uZw,IbZKCzVlYkaK6xLQGx3lsR,,,N,0,0,,,2007-02-01 02:42,2007-02-04 01:05,hbe4678,hbe4678,,,0
2616,12458797,14517,6816088,13330,1,100,N,N,N,CP_Units,TT_Task,DT_FixedDUR2,RV_OK,TK_Complete,PK000MB42S,MB420 - Marshaling 101-B Cast Peep Sites,,,,0,0,0,0,320,0,0,0,,2006-03-02 00:00,2006-12-01 00:00,2008-04-05 08:01,2008-04-05 08:01,,2007-01-27 00:00,2007-01-27 00:00,,,2006-05-15 08:00,2006-07-07 17:00,,,,,PT_Normal,,,,,dp6F/a8RSWSdVWZHuig2Lg,eiYKU/Ntd0GNocJKbYCoZR,,,N,0,0,,,2007-02-01 02:42,2007-02-04 01:05,hbe4678,hbe4678,,,0
2617,12458798,14517,6816088,13330,1,0,N,N,N,CP_Units,TT_Task,DT_FixedDUR2,RV_OK,TK_NotStart,PK000MB51S,MB511 - Marshaling 101-B Insulation,,1632,0,120,0,0,0,320,0,0,0,,,,2007-11-12 08:00,2007-11-30 17:00,,2007-01-30 08:00,2007-02-19 17:00,2007-01-30 08:00,2007-02-19 17:00,2007-01-30 08:00,2007-03-26 17:00,,2007-11-12 08:00,2007-11-30 17:00,,PT_Normal,,,,,5UdCnQioTI2itX1ru/Qe/w,wMBmYUQ93EKC6hllj5+CEx,,,N,0,0,,,2007-02-01 02:42,2007-02-01 02:43,hbe4678,hbe4678,2007-01-30 08:00,2007-02-19 17:00,120
2618,12458799,14517,6816088,13330,1,0,N,N,N,CP_Units,TT_Task,DT_FixedDUR2,RV_OK,TK_Active,PK000MB62S,MB621 - Marshaling 101-B ID & FD Fans,,1720,0,280,0,0,0,320,0,0,0,,2006-12-18 08:00,,2007-11-26 08:00,2008-01-11 17:00,,2007-01-29 08:00,2007-03-16 17:00,2007-01-29 08:00,2007-03-16 17:00,2006-12-18 08:00,2007-02-09 17:00,,2007-11-26 08:00,2008-01-11 17:00,,PT_Normal,,,,,4ytGoB8wRx2pB7fk9Lc1BQ,btqHfedIdEmFhDI3nbANOh,,,N,0,0,,,2007-02-01 02:42,2007-02-01 02:43,hbe4678,hbe4678,2007-01-29 08:00,2007-03-16 17:00,280
2619,12458800,14517,6816088,13330,1,100,N,N,N,CP_Units,TT_Task,DT_FixedDUR2,RV_OK,TK_Complete,PK000MB65S,MB622 - Marshaling 101-B Penthouse Circ Fans,,,,0,0,0,0,320,0,0,0,,2006-06-12 00:00,2006-08-16 00:00,2007-12-17 08:01,2007-12-17 08:01,,2007-01-27 00:00,2007-01-27 00:00,,,2006-06-16 08:00,2006-08-10 17:00,,,,,PT_Normal,,,,,cLbDtEd8SMOnwQurtAUM7g,ooI0eheygEaCHsHAwOPNZR,,,N,0,0,,,2007-02-01 02:42,2007-02-04 01:05,hbe4678,hbe4678,,,0
2620,12458801,14517,6816088,13330,1,100,N,N,N,CP_Units,TT_Task,DT_FixedDUR2,RV_OK,TK_Complete,PK000PS00F,000 SP Items - Issue Formal Blanket P.O.,,,,0,0,0,0,40,0,0,0,,2006-06-19 08:00,2006-07-13 00:00,2008-01-09 08:01,2008-01-09 08:01,,2007-01-27 00:00,2007-01-27 00:00,,,2006-06-19 08:00,2006-06-23 17:00,,,,,PT_Normal,,,,,gbajWJWhSI+QNsVrSru34Q,z7qStI5cIEuGfZY6DAIRdR,,,N,0,0,,,2007-02-01 02:42,2007-02-04 01:05,hbe4678,hbe4678,,,0
2621,12458802,14517,6816088,13329,0,0,N,N,N,CP_Units,TT_FinMile,DT_FixedDUR2,RV_OK,TK_NotStart,PK000PS00J,000 SP Items - Recv on Site,,2176.01666666667,1504,0,0,0,0,0,0,0,0,,,,2008-03-20 08:01,2008-03-20 08:01,,2007-04-09 17:00,2007-04-09 17:00,2007-04-09 17:00,2007-04-09 17:00,2007-04-09 17:00,2007-04-09 17:00,,2008-03-20 08:01,2008-03-20 08:01,,PT_Normal,,,,,gN5w7Fn8ShCcHB4hs0kpUQ,vhklEDrbKk2NjgysZ/xxRB,,,N,0,0,,,2007-02-01 02:42,2007-02-04 01:00,hbe4678,hbe4678,2007-04-09 17:00,2007-04-09 17:00,0
2622,12458803,14517,6816088,13330,1,100,N,N,N,CP_Units,TT_Task,DT_FixedDUR2,RV_OK,TK_Complete,PK000PS00A,000 SP Items - Issue RFQ,,,,0,0,0,0,40,0,0,0,,2006-02-24 00:00,2006-03-01 00:00,2008-01-09 08:01,2008-01-09 08:01,,2007-01-27 00:00,2007-01-27 00:00,,,2006-03-27 08:00,2006-03-31 17:00,,,,,PT_Normal,,,,,2IYtmp8uQSSbcv3FH4rsWQ,4jPnDcUgBke/QN7e42NrMx,,,N,0,0,,,2007-02-01 02:42,2007-02-04 01:05,hbe4678,hbe4678,,,0
2623,12458804,14517,6816088,13330,1,100,N,N,N,CP_Units,TT_Task,DT_FixedDUR2,RV_OK,TK_Complete,PK000PS00B,000 SP Items - Receive Quotes,,,,0,0,0,0,120,0,0,0,,2006-03-01 00:00,2006-03-14 00:00,2008-01-09 08:01,2008-01-09 08:01,,2007-01-27 00:00,2007-01-27 00:00,,,2006-03-27 08:00,2006-04-14 17:00,,,,,PT_Normal,,,,,0t2kz5wYTCm832+9BpwRcw,fx0LOJdfMEivmmPk5mmoKh,,,N,0,0,,,2007-02-01 02:42,2007-02-04 01:05,hbe4678,hbe4678,,,0
2624,12458805,14517,6816088,13330,1,100,N,N,N,CP_Units,TT_Task,DT_FixedDUR2,RV_OK,TK_Complete,PK000PS00D,000 SP Items - Eval Bids / Issue Recmd,,,,0,0,0,0,40,0,0,0,,2006-03-14 00:00,2006-03-21 00:00,2008-01-09 08:01,2008-01-09 08:01,,2007-01-27 00:00,2007-01-27 00:00,,,2006-04-24 08:00,2006-04-28 17:00,,,,,PT_Normal,,,,,PbzkHP8dRBmWCHGR1A/sXw,JRMwHkkleU2hoNPdO23IHh,,,N,0,0,,,2007-02-01 02:42,2007-02-04 01:05,hbe4678,hbe4678,,,0
2625,12458806,14517,6816088,13330,1,100,N,N,N,CP_Units,TT_Task,DT_FixedDUR2,RV_OK,TK_Complete,PK000I124G,Final Negotiation / Interim Award - Rotameters,,,,0,0,0,0,40,0,0,0,,2005-08-31 00:00,2005-09-01 00:00,2009-01-29 08:00,2009-01-29 08:00,,2007-01-27 00:00,2007-01-27 00:00,,,2005-09-29 08:00,2005-10-05 17:00,,,,,PT_Normal,,,,,+SoDQlMDQZOhSaZGb3sN3Q,z9sguBoC/EuFSMMDE90mhB,,,N,0,0,,,2007-02-01 02:42,2007-02-04 01:05,hbe4678,hbe4678,,,0
2626,12458807,14517,6816088,13330,1,100,N,N,N,CP_Units,TT_Task,DT_FixedDUR2,RV_OK,TK_Complete,PK000I124K,Issue Formal Purchase Agreement - Rotameters,,,,0,0,0,0,40,0,0,0,,2005-09-01 00:00,2005-11-30 17:00,2009-01-29 08:00,2009-01-29 08:00,,2007-01-27 00:00,2007-01-27 00:00,,,2005-10-10 08:01,2005-10-17 08:01,,,,,PT_Normal,,,,,QZX6nJ3lQNaZm36jgJoZJg,INNlVk4Wd0aIjHFDsyvZ+x,,,N,0,0,,,2007-02-01 02:42,2007-02-04 01:05,hbe4678,hbe4678,,,0
2627,12458808,14517,6816088,13330,1,100,N,N,N,CP_Units,TT_Task,DT_FixedDUR2,RV_OK,TK_Complete,PK000I354K,ITCC - Formal Award,,,,0,0,0,0,40,0,0,0,,2006-02-20 00:00,2006-03-13 00:00,2007-04-16 08:00,2007-04-16 08:00,,2007-01-27 00:00,2007-01-27 00:00,,,2006-04-17 08:00,2006-04-21 17:00,,,,,PT_Normal,,,,,rTMzf1WmThatjboBjn13bA,e+AvHtakYU+2PBkYRNxfPB,,,N,0,0,,,2007-02-01 02:42,2007-02-04 01:05,hbe4678,hbe4678,,,0
2628,12458809,14517,6816088,13330,1,0,N,N,N,CP_Units,TT_Task,DT_FixedDUR2,RV_OK,TK_NotStart,PK000I354N,ITCC - Transport & Delivery,,440,0,400,0,0,0,400,0,0,0,,,,2007-04-30 08:00,2007-07-06 17:00,,2007-02-12 08:00,2007-04-20 17:00,2007-02-12 08:00,2007-04-20 17:00,2007-02-12 08:00,2007-04-20 17:00,,2007-04-30 08:00,2007-07-06 17:00,,PT_Normal,,,,,FT/puHoXTBWrC16UBocB8Q,V1SDJJpDuk65KvKO6IkbDh,,,N,0,0,,,2007-02-01 02:42,2007-02-01 02:43,hbe4678,hbe4678,2007-02-12 08:00,2007-04-20 17:00,400
2629,12458810,14517,6816088,13330,1,100,N,N,N,CP_Units,TT_Task,DT_FixedDUR2,RV_OK,TK_Complete,PK000I3540,ITCC - Vendor Update Pricing / Quote,,,,0,0,0,0,40,0,0,0,,2006-04-06 00:00,2006-04-28 17:00,2007-04-16 08:00,2007-04-16 08:00,,2007-01-27 00:00,2007-01-27 00:00,,,2006-04-17 08:00,2006-04-21 17:00,,,,,PT_Normal,,,,,FZHcn0zRRxK/Hzs9XF6T5A,oJ9NmXqGNEWsLVVANe66rh,,,N,0,0,,,2007-02-01 02:42,2007-02-04 01:05,hbe4678,hbe4678,,,0
2630,12458811,14517,6816088,13330,1,100,N,N,N,CP_Units,TT_Task,DT_FixedDUR2,RV_OK,TK_Complete,PK000I3542,ITCC - Software Programming by Vendor,,,,0,0,0,0,800,0,0,0,,2006-09-04 08:00,2006-10-23 17:00,2007-04-16 08:00,2007-04-16 08:00,,2007-01-27 00:00,2007-01-27 00:00,,,2006-09-04 08:00,2007-01-19 17:00,,,,,PT_Normal,,,,,1eypCLnURw+6qUUo61el9A,juK2BxVNXE+q2xbuln1bsB,,,N,0,0,,,2007-02-01 02:42,2007-02-04 01:05,hbe4678,hbe4678,,,0
2631,12458812,14517,6816088,13330,1,100,N,N,N,CP_Units,TT_Task,DT_FixedDUR2,RV_OK,TK_Complete,PK000I3543,ITCC - FAT Test,,,,0,0,0,0,80,0,0,0,,2006-10-30 00:00,2006-11-22 17:00,2007-04-16 08:00,2007-04-16 08:00,,2007-01-27 00:00,2007-01-27 00:00,,,2006-10-23 08:00,2006-11-03 17:00,,,,,PT_Normal,,,,,qeMOneAaTlWXlpgK9jvpxQ,SGWx0AXUpkKthbTM2+SvRR,,,N,0,0,,,2007-02-01 02:42,2007-02-04 01:05,hbe4678,hbe4678,,,0
2632,12458813,14517,6816088,13330,1,100,N,N,N,CP_Units,TT_Task,DT_FixedDUR2,RV_OK,TK_Complete,PK000I3544,ITCC - Cleanup / Changes,,,,0,0,0,0,80,0,0,0,,2006-11-23 08:00,2006-11-27 17:00,2007-04-16 08:00,2007-04-16 08:00,,2007-01-27 00:00,2007-01-27 00:00,,,2006-11-23 08:00,2006-12-06 17:00,,,,,PT_Normal,,,,,3uPu6/hrTSO0Ats1PEB0fA,TLAQfi9xBEyEyWGuPgIshB,,,N,0,0,,,2007-02-01 02:42,2007-02-04 01:05,hbe4678,hbe4678,,,0
2633,12458814,14517,6816088,13330,1,0,N,N,N,CP_Units,TT_Task,DT_FixedDUR2,RV_OK,TK_Active,PK000I3545,ITCC - Packing / Exworks,,440,0,80,0,0,0,40,0,0,0,,2006-12-11 08:00,,2007-04-16 08:00,2007-04-27 17:00,,2007-01-29 08:00,2007-02-09 17:00,2007-01-29 08:00,2007-02-09 17:00,2006-12-11 08:00,2006-12-15 17:00,,2007-04-16 08:00,2007-04-27 17:00,,PT_Normal,,,,,scfzajnHQu2x13JTnIk8gQ,VcBIydrNQEWg7g03asQRQR,,,N,0,0,,,2007-02-01 02:42,2007-02-01 02:43,hbe4678,hbe4678,2007-01-29 08:00,2007-02-09 17:00,80
2634,12458815,14517,6816088,13330,1,100,N,N,N,CP_Units,TT_Task,DT_FixedDUR2,RV_OK,TK_Complete,PK000I352K,SIS - Formal Award,,,,0,0,0,0,80,0,0,0,,2006-02-20 00:00,2006-03-13 00:00,2007-04-16 08:00,2007-04-16 08:00,,2007-01-27 00:00,2007-01-27 00:00,,,2006-06-12 08:00,2006-06-23 17:00,,,,,PT_Normal,,,,,F5wiFNmvQRSvHGLpSiokZA,e+AvHtakYU+2PBkYRNxfPB,,,N,0,0,,,2007-02-01 02:42,2007-02-04 01:05,hbe4678,hbe4678,,,0
2635,12458816,14517,6816088,13330,1,0,N,N,N,CP_Units,TT_Task,DT_FixedDUR2,RV_OK,TK_NotStart,PK000I352N,SIS - Transport & Delivery,,440,0,400,0,0,0,400,0,0,0,,,,2007-04-30 08:00,2007-07-06 17:00,,2007-02-12 08:00,2007-04-20 17:00,2007-02-12 08:00,2007-04-20 17:00,2007-02-12 08:00,2007-04-20 17:00,,2007-04-30 08:00,2007-07-06 17:00,,PT_Normal,,,,,peC8LMDlST6VALEmoQgdjw,V1SDJJpDuk65KvKO6IkbDh,,,N,0,0,,,2007-02-01 02:42,2007-02-01 02:43,hbe4678,hbe4678,2007-02-12 08:00,2007-04-20 17:00,400
2636,12458817,14517,6816088,13330,1,100,N,N,N,CP_Units,TT_Task,DT_FixedDUR2,RV_OK,TK_Complete,PK000I3520,SIS - Vendor Update Pricing / Quote,,,,0,0,0,0,40,0,0,0,,2006-05-22 08:00,2006-05-29 17:00,2007-04-16 08:00,2007-04-16 08:00,,2007-01-27 00:00,2007-01-27 00:00,,,2006-05-22 08:00,2006-05-26 17:00,,,,,PT_Normal,,,,,FnfP1PnTT7SPUd+rYh3gQw,oJ9NmXqGNEWsLVVANe66rh,,,N,0,0,,,2007-02-01 02:42,2007-02-04 01:05,hbe4678,hbe4678,,,0
2637,12458818,14517,6816088,13330,1,100,N,N,N,CP_Units,TT_Task,DT_FixedDUR2,RV_OK,TK_Complete,PK000I3521,SIS - Vendor Provides Software & Workstations,,,,0,0,0,0,160,0,0,0,,2006-05-16 08:00,2006-05-25 00:00,2007-04-16 08:00,2007-04-16 08:00,,2007-01-27 00:00,2007-01-27 00:00,,,2006-05-22 08:00,2006-06-16 17:00,,,,,PT_Normal,,,,,U6QDmvN5RZy1Q1MtqPK9Xw,F0qNJ6RlGE6A53tnq+g+9h,,,N,0,0,,,2007-02-01 02:42,2007-02-04 01:05,hbe4678,hbe4678,,,0
2638,12458819,14517,6816088,13330,1,100,N,N,N,CP_Units,TT_Task,DT_FixedDUR2,RV_OK,TK_Complete,PK000I3522,SIS - FAT Test,,,,0,0,0,0,80,0,0,0,,2006-10-24 00:00,2006-11-17 17:00,2007-04-16 08:00,2007-04-16 08:00,,2007-01-27 00:00,2007-01-27 00:00,,,2006-10-30 08:00,2006-11-10 17:00,,,,,PT_Normal,,,,,Tdn64TntSie7rSFwrVCehg,SGWx0AXUpkKthbTM2+SvRR,,,N,0,0,,,2007-02-01 02:42,2007-02-04 01:05,hbe4678,hbe4678,,,0
2639,12458820,14517,6816088,13330,1,100,N,N,N,CP_Units,TT_Task,DT_FixedDUR2,RV_OK,TK_Complete,PK000I3523,SIS - Cleanup / Changes,,,,0,0,0,0,80,0,0,0,,2006-11-20 08:00,2006-11-22 17:00,2007-04-16 08:00,2007-04-16 08:00,,2007-01-27 00:00,2007-01-27 00:00,,,2006-11-20 08:00,2006-12-01 17:00,,,,,PT_Normal,,,,,q7qTNoOxThyBLt4t+0NW3g,TLAQfi9xBEyEyWGuPgIshB,,,N,0,0,,,2007-02-01 02:42,2007-02-04 01:05,hbe4678,hbe4678,,,0
2640,12458821,14517,6816088,13330,1,0,N,N,N,CP_Units,TT_Task,DT_FixedDUR2,RV_OK,TK_Active,PK000I3524,SIS - Packing / Exworks,,440,0,80,0,0,0,40,0,0,0,2006-12-04 00:00,2006-12-11 08:00,,2007-04-16 08:00,2007-04-27 17:00,,2007-01-29 08:00,2007-02-09 17:00,2007-01-29 08:00,2007-02-09 17:00,2006-12-11 08:00,2006-12-15 17:00,,2007-04-16 08:00,2007-04-27 17:00,CS_MSOA,PT_Normal,,,,,qROhqv32QuuqBG8iuVI1dw,VcBIydrNQEWg7g03asQRQR,,,N,0,0,,,2007-02-01 02:42,2007-02-01 02:43,hbe4678,hbe4678,2007-01-29 08:00,2007-02-09 17:00,80
2641,12458822,14517,6816088,13330,1,100,N,N,N,CP_Units,TT_Task,DT_FixedDUR2,RV_OK,TK_Complete,PK000I354B,ITCC - Inquiry REQ/RFQ,,,,0,0,0,0,40,0,0,0,,2005-08-24 00:00,2005-09-01 00:00,2007-04-16 08:00,2007-04-16 08:00,,2007-01-27 00:00,2007-01-27 00:00,,,2005-08-29 08:00,2005-09-02 17:00,,,,,PT_Normal,,,,,teh+Z+VeQ1WG3fAINyAV2w,LZwZmN+1Fk+EPGYKHkkMih,,,N,0,0,,,2007-02-01 02:42,2007-02-04 01:05,hbe4678,hbe4678,,,0
2642,12458823,14517,6816088,13330,1,100,N,N,N,CP_Units,TT_Task,DT_FixedDUR2,RV_OK,TK_Complete,PK000I354C,ITCC - Receive Bids,,,,0,0,0,0,120,0,0,0,,2005-09-01 00:00,2005-09-28 00:00,2007-04-16 08:00,2007-04-16 08:00,,2007-01-27 00:00,2007-01-27 00:00,,,2005-09-29 08:00,2005-10-19 17:00,,,,,PT_Normal,,,,,WCyXzlXXQdCKAgBsRCrjlg,S3yMJIbD/EKdqzxcjQRHUh,,,N,0,0,,,2007-02-01 02:42,2007-02-04 01:05,hbe4678,hbe4678,,,0
2643,12458824,14517,6816088,13330,1,100,N,N,N,CP_Units,TT_Task,DT_FixedDUR2,RV_OK,TK_Complete,PK000I354E,ITCC - Eval Bids/Issue Recmd,,,,0,0,0,0,40,0,0,0,,2006-01-16 00:00,2006-01-27 17:00,2007-04-16 08:00,2007-04-16 08:00,,2007-01-27 00:00,2007-01-27 00:00,,,2006-01-06 08:00,2006-01-12 17:00,,,,,PT_Normal,,,,,rLRhUs1kT0mBkbax3KfjFg,2nPJjgQLW0ChU0kEnie0vB,,,N,0,0,,,2007-02-01 02:42,2007-02-04 01:05,hbe4678,hbe4678,,,0
2644,12458825,14517,6816088,13330,1,100,N,N,N,CP_Units,TT_Task,DT_FixedDUR2,RV_OK,TK_Complete,PK000I354G,ITCC - Interim Award,,,,0,0,0,0,40,0,0,0,,2006-01-20 00:00,2006-02-20 00:00,2007-04-16 08:00,2007-04-16 08:00,,2007-01-27 00:00,2007-01-27 00:00,,,2006-01-30 08:01,2006-02-06 08:01,,,,,PT_Normal,,,,,WvAjlNwWQYOnthWGxAwC0w,ZsdVzXFCpE67fMxwlUTSoh,,,N,0,0,,,2007-02-01 02:42,2007-02-04 01:05,hbe4678,hbe4678,,,0
2645,12458826,14517,6816088,13330,1,100,N,N,N,CP_Units,TT_Task,DT_FixedDUR2,RV_OK,TK_Complete,PK000I354H,ITCC - Fabricate Hardware,,,,0,0,0,0,800,0,0,0,,2005-03-14 00:00,2006-10-05 00:00,2007-04-16 08:00,2007-04-16 08:00,,2007-01-27 00:00,2007-01-27 00:00,,,2006-10-02 08:00,2007-02-16 17:00,,,,,PT_Normal,,,,,cxD+yatSTrK07wEX3uXJGw,Kz8v4SLZuUGZUENyis0q8h,,,N,0,0,,,2007-02-01 02:42,2007-02-04 01:05,hbe4678,hbe4678,,,0
2646,12458827,14517,6816088,13330,1,100,N,N,N,CP_Units,TT_Task,DT_FixedDUR2,RV_OK,TK_Complete,PK000IC350,DCS - Vendor Update Pricing / Quote,,,,0,0,0,0,40,0,0,0,,2005-11-07 00:00,2005-11-11 00:00,2007-04-16 08:00,2007-04-16 08:00,,2007-01-27 00:00,2007-01-27 00:00,,,2005-12-19 08:00,2005-12-23 17:00,,,,,PT_Normal,,,,,1ZWcoQqDQlaYlimd19V/4A,,,,N,0,0,,,2007-02-01 02:42,2007-02-04 01:05,hbe4678,hbe4678,,,0
2647,12458828,14517,6816088,13330,1,100,N,N,N,CP_Units,TT_Task,DT_FixedDUR2,RV_OK,TK_Complete,PK000I121G,Final Negotiation / Interim Award - Vortex Meters,,,,0,0,0,0,40,0,0,0,,2005-08-31 00:00,2005-09-01 00:00,2009-02-12 08:00,2009-02-12 08:00,,2007-01-27 00:00,2007-01-27 00:00,,,2005-09-29 08:00,2005-10-05 17:00,,,,,PT_Normal,,,,,SrQ4c19wREO/Cz0Cp2/HTQ,z9sguBoC/EuFSMMDE90mhB,,,N,0,0,,,2007-02-01 02:42,2007-02-04 01:05,hbe4678,hbe4678,,,0
2648,12458829,14517,6816088,13330,1,100,N,N,N,CP_Units,TT_Task,DT_FixedDUR2,RV_OK,TK_Complete,PK000I121K,Issue Formal Purchase Agreement - Vortex Meters,,,,0,0,0,0,40,0,0,0,,2005-09-01 00:00,2005-11-30 17:00,2009-02-12 08:00,2009-02-12 08:00,,2007-01-27 00:00,2007-01-27 00:00,,,2005-10-10 08:01,2005-10-17 08:01,,,,,PT_Normal,,,,,EH+OX3yPSOWcrlo4unvPJg,INNlVk4Wd0aIjHFDsyvZ+x,,,N,0,0,,,2007-02-01 02:42,2007-02-04 01:05,hbe4678,hbe4678,,,0
2649,12458830,14517,6816088,13330,1,100,N,N,N,CP_Units,TT_Task,DT_FixedDUR2,RV_OK,TK_Complete,PK000I1270,Fabricate/Exworks Magnetic Flow Meters,,,,0,0,0,0,640,0,0,0,,2006-06-12 08:00,2006-10-30 00:00,2009-02-15 08:01,2009-02-15 08:01,,2007-01-27 00:00,2007-01-27 00:00,,,2006-06-12 08:00,2006-09-29 17:00,,,,,PT_Normal,,,,,QFG8vXlXQfmyxisAWtCzSQ,LNv7KQye3EO4lzcmDK4+iR,,,N,0,0,,,2007-02-01 02:42,2007-02-04 01:05,hbe4678,hbe4678,,,0
2650,12458831,14517,6816088,13330,1,100,N,N,N,CP_Units,TT_Task,DT_FixedDUR2,RV_OK,TK_Complete,PK000I1271,Transport & Deliver Magnetic Flow Meters,,,,0,0,0,0,400,0,0,0,2006-10-30 00:00,2006-10-31 08:00,2006-12-29 17:00,2009-02-15 08:01,2009-02-15 08:01,,2007-01-27 00:00,2007-01-27 00:00,,,2006-10-31 08:00,2007-01-08 17:00,,,,CS_MSOA,PT_Normal,,,,,vhcApUHWTHq2cbEzGhhGXg,UwZnHZws6kqY2W6xD/88nh,,,N,0,0,,,2007-02-01 02:42,2007-02-04 01:05,hbe4678,hbe4678,,,0
2651,12458832,14517,6816088,13330,1,100,N,N,N,CP_Units,TT_Task,DT_FixedDUR2,RV_OK,TK_Complete,PK000I127B,Magnetic Flow Meters - Issue RFQ,,,,0,0,0,0,40,0,0,0,,2005-05-26 00:00,2005-06-01 00:00,2009-02-15 08:01,2009-02-15 08:01,,2007-01-27 00:00,2007-01-27 00:00,,,2005-06-03 08:00,2005-06-09 17:00,,,,,PT_Normal,,,,,Rl4ao4ytQ+aFty/nHBdJsA,BHyUEcFKI0ypy1GrthifbR,,,N,0,0,,,2007-02-01 02:42,2007-02-04 01:05,hbe4678,hbe4678,,,0
2652,12458833,14517,6816088,13330,1,100,N,N,N,CP_Units,TT_Task,DT_FixedDUR2,RV_OK,TK_Complete,PK000I127C,Magnetic Flow Meters - Receive Quotes,,,,0,0,0,0,120,0,0,0,,2005-06-02 00:00,2005-06-20 00:00,2009-02-15 08:01,2009-02-15 08:01,,2007-01-27 00:00,2007-01-27 00:00,,,2005-06-10 08:00,2005-06-30 17:00,,,,,PT_Normal,,,,,bu7MQT/bSNu4oO04cv71cg,qq7h9Xw4qE6kwEEsgZt63R,,,N,0,0,,,2007-02-01 02:42,2007-02-04 01:05,hbe4678,hbe4678,,,0
2653,12458834,14517,6816088,13330,1,100,N,N,N,CP_Units,TT_Task,DT_FixedDUR2,RV_OK,TK_Complete,PK000I127E,Magnetic Flow Meters - Eval Bids / Issue Recmd,,,,0,0,0,0,40,0,0,0,,2005-07-28 00:00,2005-08-31 00:00,2009-02-15 08:01,2009-02-15 08:01,,2007-01-27 00:00,2007-01-27 00:00,,,2005-07-18 08:00,2005-07-22 17:00,,,,,PT_Normal,,,,,CEKIFWyoS1qFV2KJ/ApRhw,VhGxEJjor0iPB3srw1LM1x,,,N,0,0,,,2007-02-01 02:42,2007-02-04 01:05,hbe4678,hbe4678,,,0
2654,12458835,14517,6816088,13330,1,100,N,N,N,CP_Units,TT_Task,DT_FixedDUR2,RV_OK,TK_Complete,PK000I127G,Final Negotiation / Interim Award - Magnetic Flow Meters,,,,0,0,0,0,40,0,0,0,,2005-08-31 00:00,2005-09-01 00:00,2009-02-15 08:01,2009-02-15 08:01,,2007-01-27 00:00,2007-01-27 00:00,,,2005-09-29 08:00,2005-10-05 17:00,,,,,PT_Normal,,,,,7ykPXNvLSwyOUIb0QU8VSw,z9sguBoC/EuFSMMDE90mhB,,,N,0,0,,,2007-02-01 02:42,2007-02-04 01:05,hbe4678,hbe4678,,,0
2655,12458836,14517,6816088,13330,1,100,N,N,N,CP_Units,TT_Task,DT_FixedDUR2,RV_OK,TK_Complete,PK000I127K,Magnetic Flow Meters - Issue Formal Purchase Agreement,,,,0,0,0,0,40,0,0,0,,2005-09-01 00:00,2005-11-30 17:00,2009-02-15 08:01,2009-02-15 08:01,,2007-01-27 00:00,2007-01-27 00:00,,,2005-10-10 08:01,2005-10-17 08:01,,,,,PT_Normal,,,,,1UUyTtRURoGJJjGF6WsjMA,INNlVk4Wd0aIjHFDsyvZ+x,,,N,0,0,,,2007-02-01 02:42,2007-02-04 01:05,hbe4678,hbe4678,,,0
2656,12458837,14517,6816088,13330,1,100,N,N,N,CP_Units,TT_Task,DT_FixedDUR2,RV_OK,TK_Complete,PK000I1220,Coriolis Meters - Fabricate/Exworks,,,,0,0,0,0,640,0,0,0,,2006-03-01 00:00,2006-08-16 00:00,2009-02-15 08:01,2009-02-15 08:01,,2007-01-27 00:00,2007-01-27 00:00,,,2006-09-11 08:00,2006-12-29 17:00,,,,,PT_Normal,,,,,fIWpEYbhSy6KFc9sg1/DTA,LNv7KQye3EO4lzcmDK4+iR,,,N,0,0,,,2007-02-01 02:42,2007-02-04 01:05,hbe4678,hbe4678,,,0
2657,12458838,14517,6816088,13330,1,100,N,N,N,CP_Units,TT_Task,DT_FixedDUR2,RV_OK,TK_Complete,PK000I1221,Coriolis Meters - Transport & Deliver,,,,0,0,0,0,400,0,0,0,,2006-08-16 00:00,2006-08-16 00:00,2009-02-15 08:01,2009-02-15 08:01,,2007-01-27 00:00,2007-01-27 00:00,,,2007-01-16 08:00,2007-03-26 17:00,,,,,PT_Normal,,,,,Y+zfNDE4SHilaLl5uJQvmw,UwZnHZws6kqY2W6xD/88nh,,,N,0,0,,,2007-02-01 02:42,2007-02-04 01:05,hbe4678,hbe4678,,,0
2658,12458839,14517,6816088,13330,1,100,N,N,N,CP_Units,TT_Task,DT_FixedDUR2,RV_OK,TK_Complete,PK000I122B,Issue RFQ - Coriolis Meters,,,,0,0,0,0,40,0,0,0,,2005-05-26 00:00,2005-06-01 00:00,2009-02-15 08:01,2009-02-15 08:01,,2007-01-27 00:00,2007-01-27 00:00,,,2005-06-03 08:00,2005-06-09 17:00,,,,,PT_Normal,,,,,AtZ3sWhKQJGBcAcGXyD+vQ,BHyUEcFKI0ypy1GrthifbR,,,N,0,0,,,2007-02-01 02:42,2007-02-04 01:05,hbe4678,hbe4678,,,0
2659,12458840,14517,6816088,13330,1,100,N,N,N,CP_Units,TT_Task,DT_FixedDUR2,RV_OK,TK_Complete,PK000I122C,Receive Quotes - Coriolis Meters,,,,0,0,0,0,120,0,0,0,,2005-06-02 00:00,2005-06-20 00:00,2009-02-15 08:01,2009-02-15 08:01,,2007-01-27 00:00,2007-01-27 00:00,,,2005-06-10 08:00,2005-06-30 17:00,,,,,PT_Normal,,,,,L4x09RSKTwKMUo/1mBicCA,qq7h9Xw4qE6kwEEsgZt63R,,,N,0,0,,,2007-02-01 02:42,2007-02-04 01:05,hbe4678,hbe4678,,,0
2660,12458841,14517,6816088,13330,1,100,N,N,N,CP_Units,TT_Task,DT_FixedDUR2,RV_OK,TK_Complete,PK000I122E,Eval Bids / Issue Recmd - Coriolis Meters,,,,0,0,0,0,40,0,0,0,,2005-06-21 00:00,2005-08-31 00:00,2009-02-15 08:01,2009-02-15 08:01,,2007-01-27 00:00,2007-01-27 00:00,,,2005-07-25 08:00,2005-07-29 17:00,,,,,PT_Normal,,,,,7SMrlF4DSeq6gR2fHf4OMQ,VhGxEJjor0iPB3srw1LM1x,,,N,0,0,,,2007-02-01 02:42,2007-02-04 01:05,hbe4678,hbe4678,,,0
2661,12458842,14517,6816088,13330,1,100,N,N,N,CP_Units,TT_Task,DT_FixedDUR2,RV_OK,TK_Complete,PK000I122G,Final Negotiation / Interim Award - Coriolis Meters,,,,0,0,0,0,40,0,0,0,,2005-08-31 00:00,2005-09-01 00:00,2009-02-15 08:01,2009-02-15 08:01,,2007-01-27 00:00,2007-01-27 00:00,,,2005-09-29 08:00,2005-10-05 17:00,,,,,PT_Normal,,,,,aP9pXwodSqm+txToyqEaGw,z9sguBoC/EuFSMMDE90mhB,,,N,0,0,,,2007-02-01 02:42,2007-02-04 01:05,hbe4678,hbe4678,,,0
2662,12458843,14517,6816088,13330,1,100,N,N,N,CP_Units,TT_Task,DT_FixedDUR2,RV_OK,TK_Complete,PK000I122K,Issue Formal Purchase Agreement - Coriolis Meters,,,,0,0,0,0,40,0,0,0,,2005-09-01 00:00,2005-11-30 17:00,2009-02-15 08:01,2009-02-15 08:01,,2007-01-27 00:00,2007-01-27 00:00,,,2005-10-10 08:01,2005-10-17 08:01,,,,,PT_Normal,,,,,KGoWRsOZQkCN6KcTb0Poyw,INNlVk4Wd0aIjHFDsyvZ+x,,,N,0,0,,,2007-02-01 02:42,2007-02-04 01:05,hbe4678,hbe4678,,,0
2663,12458844,14517,6816088,13330,1,100,N,N,N,CP_Units,TT_Task,DT_FixedDUR2,RV_OK,TK_Complete,PK000I124B,Issue RFQ - Rotameters,,,,0,0,0,0,40,0,0,0,,2005-05-26 00:00,2005-06-01 00:00,2009-01-29 08:00,2009-01-29 08:00,,2007-01-27 00:00,2007-01-27 00:00,,,2005-06-03 08:00,2005-06-09 17:00,,,,,PT_Normal,,,,,SgjHDpqxRJm611pu7pRgCw,BHyUEcFKI0ypy1GrthifbR,,,N,0,0,,,2007-02-01 02:42,2007-02-04 01:05,hbe4678,hbe4678,,,0
2664,12458845,14517,6816088,13330,1,100,N,N,N,CP_Units,TT_Task,DT_FixedDUR2,RV_OK,TK_Complete,PK000I124C,Receive Quotes - Rotameters,,,,0,0,0,0,120,0,0,0,,2005-06-02 00:00,2005-06-20 00:00,2009-01-29 08:00,2009-01-29 08:00,,2007-01-27 00:00,2007-01-27 00:00,,,2005-06-10 08:00,2005-06-30 17:00,,,,,PT_Normal,,,,,lo7eDn9bTMy9QLFZgKyMDw,qq7h9Xw4qE6kwEEsgZt63R,,,N,0,0,,,2007-02-01 02:42,2007-02-04 01:05,hbe4678,hbe4678,,,0
2665,12458846,14517,6816088,13330,1,100,N,N,N,CP_Units,TT_Task,DT_FixedDUR2,RV_OK,TK_Complete,PK000I124E,Eval Bids / Issue Recmd - Rotameters,,,,0,0,0,0,40,0,0,0,,2005-06-21 00:00,2005-08-31 00:00,2009-01-29 08:00,2009-01-29 08:00,,2007-01-27 00:00,2007-01-27 00:00,,,2005-07-25 08:00,2005-07-29 17:00,,,,,PT_Normal,,,,,SUWLI80KTzap5a3cpVtMtw,VhGxEJjor0iPB3srw1LM1x,,,N,0,0,,,2007-02-01 02:42,2007-02-04 01:05,hbe4678,hbe4678,,,0
2666,12458847,14517,6816088,13330,1,100,N,N,N,CP_Units,TT_Task,DT_FixedDUR2,RV_OK,TK_Complete,PK000I220G,Final Negotiation / Interim Award - MOV's,,,,0,0,0,0,80,0,0,0,,2005-09-27 00:00,2005-10-03 00:00,2009-01-02 17:00,2009-01-02 17:00,,2007-01-27 00:00,2007-01-27 00:00,,,2005-10-10 08:00,2005-10-21 17:00,,,,,PT_Normal,,,,,ZCrbSJvUSk+mgAlIN4mOcQ,PfHcQO8LlEGvMqQgnHsmeB,,,N,0,0,,,2007-02-01 02:42,2007-02-04 01:05,hbe4678,hbe4678,,,0
2667,12458848,14517,6816088,13330,1,100,N,N,N,CP_Units,TT_Task,DT_FixedDUR2,RV_OK,TK_Complete,PK000I220K,Issue Formal Purchase Agreement. - MOV's,,,,0,0,0,0,40,0,0,0,,2005-10-17 08:00,2006-01-13 00:00,2009-01-02 17:00,2009-01-02 17:00,,2007-01-27 00:00,2007-01-27 00:00,,,2005-10-17 08:00,2005-10-21 17:00,,,,,PT_Normal,,,,,13YbpIkaRGKggqR7tYaHtg,SkgL68oI3Eql8cUZFCmFvx,,,N,0,0,,,2007-02-01 02:42,2007-02-04 01:05,hbe4678,hbe4678,,,0
2668,12458849,14517,6816088,13330,1,100,N,N,N,CP_Units,TT_Task,DT_FixedDUR2,RV_OK,TK_Complete,PK000I1161,020 Wedge Flow Meters - Fabricate/Exworks,,,,0,0,0,0,640,0,0,0,,2006-06-30 00:00,2006-10-12 00:00,2009-02-15 08:01,2009-02-15 08:01,,2007-01-27 00:00,2007-01-27 00:00,,,2006-08-21 08:00,2006-12-08 17:00,,,,,PT_Normal,,,,,Lpocr2X0RbyhWdg0e6Q67w,upK8MONQfkGSKcmxPsAPKR,,,N,0,0,,,2007-02-01 02:42,2007-02-04 01:05,hbe4678,hbe4678,,,0
2669,12458850,14517,6816088,13330,1,100,N,N,N,CP_Units,TT_Task,DT_FixedDUR2,RV_OK,TK_Complete,PK000I1162,020 Wedge Flow Meters - Transport & Deliver,,,,0,0,0,0,400,0,0,0,,2006-08-08 00:00,2006-10-13 00:00,2009-02-15 08:01,2009-02-15 08:01,,2007-01-27 00:00,2007-01-27 00:00,,,2006-10-16 08:00,2006-12-22 17:00,,,,,PT_Normal,,,,,i1iEokXaS4OOKAhBMxGtmQ,PAHuaU6R90WEX+AAslXW9h,,,N,0,0,,,2007-02-01 02:42,2007-02-04 01:05,hbe4678,hbe4678,,,0
2670,12458851,14517,6816088,13330,1,100,N,N,N,CP_Units,TT_Task,DT_FixedDUR2,RV_OK,TK_Complete,PK000I116B,Issue RFQ - Wedge Flow Meters,,,,0,0,0,0,40,0,0,0,,2005-05-23 00:00,2005-05-26 00:00,2009-02-15 08:01,2009-02-15 08:01,,2007-01-27 00:00,2007-01-27 00:00,,,2005-06-03 08:00,2005-06-09 17:00,,,,,PT_Normal,,,,,twFR30wfQjOOhWV4J6RELQ,ftZsz3uJe0uMPNbdQRJUGx,,,N,0,0,,,2007-02-01 02:42,2007-02-04 01:05,hbe4678,hbe4678,,,0
2671,12458852,14517,6816088,13330,1,100,N,N,N,CP_Units,TT_Task,DT_FixedDUR2,RV_OK,TK_Complete,PK000I116C,Receive Quotes - Wedge Flow Meters,,,,0,0,0,0,120,0,0,0,,2005-05-27 00:00,2005-06-15 00:00,2009-02-15 08:01,2009-02-15 08:01,,2007-01-27 00:00,2007-01-27 00:00,,,2005-06-10 08:00,2005-06-30 17:00,,,,,PT_Normal,,,,,dR5WXvRFTCC3aJDfVCbh6A,UbnhMMqv80CCvaW5VuBSux,,,N,0,0,,,2007-02-01 02:42,2007-02-04 01:05,hbe4678,hbe4678,,,0
2672,12458853,14517,6816088,13330,1,100,N,N,N,CP_Units,TT_Task,DT_FixedDUR2,RV_OK,TK_Complete,PK000I116E,Eval Bids / Issue Recmd - Wedge Flow Meters,,,,0,0,0,0,40,0,0,0,,2005-06-16 00:00,2005-08-31 00:00,2009-02-15 08:01,2009-02-15 08:01,,2007-01-27 00:00,2007-01-27 00:00,,,2005-07-07 08:00,2005-07-13 17:00,,,,,PT_Normal,,,,,B3+SKdS3RTCvinttZEH+ng,NcH4jqHKL0CvWyImykKoZR,,,N,0,0,,,2007-02-01 02:42,2007-02-04 01:05,hbe4678,hbe4678,,,0
2673,12458854,14517,6816088,13330,1,100,N,N,N,CP_Units,TT_Task,DT_FixedDUR2,RV_OK,TK_Complete,PK000I116G,Final Negotiation / Interim Award - Wedge Flow Meters,,,,0,0,0,0,40,0,0,0,,2005-08-31 00:00,2005-09-06 00:00,2009-02-15 08:01,2009-02-15 08:01,,2007-01-27 00:00,2007-01-27 00:00,,,2005-10-06 08:00,2005-10-12 17:00,,,,,PT_Normal,,,,,AC1nEQ+PTey9Q7S1fhBvtA,PfHcQO8LlEGvMqQgnHsmeB,,,N,0,0,,,2007-02-01 02:42,2007-02-04 01:05,hbe4678,hbe4678,,,0
2674,12458855,14517,6816088,13330,1,100,N,N,N,CP_Units,TT_Task,DT_FixedDUR2,RV_OK,TK_Complete,PK000I116K,Issue Formal Purchase Agreement - Wedge Flow Meters,,,,0,0,0,0,40,0,0,0,,2005-09-06 00:00,2006-03-10 00:00,2009-02-15 08:01,2009-02-15 08:01,,2007-01-27 00:00,2007-01-27 00:00,,,2005-10-10 08:01,2005-10-17 08:01,,,,,PT_Normal,,,,,CFDoLqmtTCW5KFwTPpYn7A,SkgL68oI3Eql8cUZFCmFvx,,,N,0,0,,,2007-02-01 02:42,2007-02-04 01:05,hbe4678,hbe4678,,,0
2675,12458856,14517,6816088,13330,1,100,N,N,N,CP_Units,TT_Task,DT_FixedDUR2,RV_OK,TK_Complete,PK000I115B,Issue RFQ - Annubars,,,,0,0,0,0,40,0,0,0,,2005-05-23 00:00,2005-05-26 00:00,2009-01-09 08:00,2009-01-09 08:00,,2007-01-27 00:00,2007-01-27 00:00,,,2005-06-03 08:00,2005-06-09 17:00,,,,,PT_Normal,,,,,iuJljICHS42TIxPZFEA/WQ,BHyUEcFKI0ypy1GrthifbR,,,N,0,0,,,2007-02-01 02:42,2007-02-04 01:05,hbe4678,hbe4678,,,0
2676,12458857,14517,6816088,13330,1,100,N,N,N,CP_Units,TT_Task,DT_FixedDUR2,RV_OK,TK_Complete,PK000I115C,Receive Quotes - Annubars,,,,0,0,0,0,120,0,0,0,,2005-05-27 00:00,2005-06-14 00:00,2009-01-09 08:00,2009-01-09 08:00,,2007-01-27 00:00,2007-01-27 00:00,,,2005-06-10 08:00,2005-06-30 17:00,,,,,PT_Normal,,,,,6WA+xhkHQbKDY4o00CWQEg,qq7h9Xw4qE6kwEEsgZt63R,,,N,0,0,,,2007-02-01 02:42,2007-02-04 01:05,hbe4678,hbe4678,,,0
2677,12458858,14517,6816088,13330,1,100,N,N,N,CP_Units,TT_Task,DT_FixedDUR2,RV_OK,TK_Complete,PK000I115E,Eval Bids / Issue Recmd - Annubars,,,,0,0,0,0,40,0,0,0,,2005-06-15 00:00,2005-08-31 00:00,2009-01-09 08:00,2009-01-09 08:00,,2007-01-27 00:00,2007-01-27 00:00,,,2005-07-07 08:00,2005-07-13 17:00,,,,,PT_Normal,,,,,wc7iD5dqQR+6NOh/2APCQQ,VhGxEJjor0iPB3srw1LM1x,,,N,0,0,,,2007-02-01 02:42,2007-02-04 01:05,hbe4678,hbe4678,,,0
2678,12458859,14517,6816088,13330,1,100,N,N,N,CP_Units,TT_Task,DT_FixedDUR2,RV_OK,TK_Complete,PK000I115G,Final Negotiation / Interim Award - Annubars,,,,0,0,0,0,40,0,0,0,,2005-08-31 00:00,2005-09-01 00:00,2009-01-09 08:00,2009-01-09 08:00,,2007-01-27 00:00,2007-01-27 00:00,,,2005-09-29 08:00,2005-10-05 17:00,,,,,PT_Normal,,,,,wCqicx33Saqy/cssymkkBQ,z9sguBoC/EuFSMMDE90mhB,,,N,0,0,,,2007-02-01 02:42,2007-02-04 01:05,hbe4678,hbe4678,,,0
2679,12458860,14517,6816088,13330,1,100,N,N,N,CP_Units,TT_Task,DT_FixedDUR2,RV_OK,TK_Complete,PK000I115K,Issue Formal Purchase Agreement - Annubars,,,,0,0,0,0,40,0,0,0,,2005-09-01 00:00,2005-11-30 17:00,2009-01-09 08:00,2009-01-09 08:00,,2007-01-27 00:00,2007-01-27 00:00,,,2005-10-10 08:01,2005-10-17 08:01,,,,,PT_Normal,,,,,uDMyD0C0TyeMwAQo7461VQ,INNlVk4Wd0aIjHFDsyvZ+x,,,N,0,0,,,2007-02-01 02:42,2007-02-04 01:05,hbe4678,hbe4678,,,0
2680,12458861,14517,6816088,13330,1,100,N,N,N,CP_Units,TT_Task,DT_FixedDUR2,RV_OK,TK_Complete,PK000I121B,Issue RFQ - Vortex Meters,,,,0,0,0,0,40,0,0,0,,2005-05-26 00:00,2005-06-01 00:00,2009-02-12 08:00,2009-02-12 08:00,,2007-01-27 00:00,2007-01-27 00:00,,,2005-06-03 08:00,2005-06-09 17:00,,,,,PT_Normal,,,,,ZhqM4h0GRtqTpu3ovPEwjw,BHyUEcFKI0ypy1GrthifbR,,,N,0,0,,,2007-02-01 02:42,2007-02-04 01:05,hbe4678,hbe4678,,,0
2681,12458862,14517,6816088,13330,1,100,N,N,N,CP_Units,TT_Task,DT_FixedDUR2,RV_OK,TK_Complete,PK000I121C,Receive Quotes - Vortex Meters,,,,0,0,0,0,120,0,0,0,,2005-06-02 00:00,2005-06-20 00:00,2009-02-12 08:00,2009-02-12 08:00,,2007-01-27 00:00,2007-01-27 00:00,,,2005-06-10 08:00,2005-06-30 17:00,,,,,PT_Normal,,,,,xQtYhxWIRJ+uR/YvgFYSvQ,qq7h9Xw4qE6kwEEsgZt63R,,,N,0,0,,,2007-02-01 02:42,2007-02-04 01:05,hbe4678,hbe4678,,,0
2682,12458863,14517,6816088,13330,1,100,N,N,N,CP_Units,TT_Task,DT_FixedDUR2,RV_OK,TK_Complete,PK000I121E,Eval Bids / Issue Recmd - Vortex Meters,,,,0,0,0,0,40,0,0,0,,2005-06-21 00:00,2005-08-31 00:00,2009-02-12 08:00,2009-02-12 08:00,,2007-01-27 00:00,2007-01-27 00:00,,,2005-07-18 08:00,2005-07-22 17:00,,,,,PT_Normal,,,,,B5zdMaKvTOWrLoqlSiIs4Q,VhGxEJjor0iPB3srw1LM1x,,,N,0,0,,,2007-02-01 02:42,2007-02-04 01:05,hbe4678,hbe4678,,,0
2683,12458864,14517,6816088,13330,1,100,N,N,N,CP_Units,TT_Task,DT_FixedDUR2,RV_OK,TK_Complete,PK000I623K,Issue Formal Purchase Agreement - Multi-Point Thermocouples,,,,0,0,0,0,40,0,0,0,,2005-09-06 00:00,2006-01-30 00:00,2007-05-25 08:00,2007-05-25 08:00,,2007-01-27 00:00,2007-01-27 00:00,,,2005-09-26 08:00,2005-09-30 17:00,,,,,PT_Normal,,,,,euyBrWYhTGK01wwgKqzY4Q,GJxzCrvRiUylV4jkx+adux,,,N,0,0,,,2007-02-01 02:42,2007-02-04 01:05,hbe4678,hbe4678,,,0
2684,12458865,14517,6816088,13330,1,0,N,N,N,CP_Units,TT_Task,DT_FixedDUR2,RV_OK,TK_Active,PK020I131N,Transport & Deliver - Transmitters -Press.,,608,0,312,0,0,0,400,0,0,0,,2006-12-28 08:00,,2007-05-15 08:00,2007-07-06 17:00,2007-03-22 17:00,2007-01-29 08:00,2007-03-22 17:00,2007-01-29 08:00,2007-03-22 17:00,2006-12-28 08:00,2007-03-07 17:00,,2007-05-15 08:00,2007-07-06 17:00,,PT_Normal,,,,,MdX8h4eaRq66oJHlbLBl/Q,,,,N,0,0,,,2007-02-01 02:42,2007-02-01 02:43,hbe4678,hbe4678,2007-01-29 08:00,2007-03-22 17:00,312
2685,12458866,14517,6816088,13330,1,100,N,N,N,CP_Units,TT_Task,DT_FixedDUR2,RV_OK,TK_Complete,PK000I131B,Issue RFQ - Transmitters,,,,0,0,0,0,40,0,0,0,,2005-03-28 00:00,2005-03-31 00:00,2007-05-08 08:00,2007-05-08 08:00,,2007-01-27 00:00,2007-01-27 00:00,,,2005-06-03 08:00,2005-06-09 17:00,,,,,PT_Normal,,,,,LXdCa7tSRVmP0YCHPUkNaw,,,,N,0,0,,,2007-02-01 02:42,2007-02-04 01:05,hbe4678,hbe4678,,,0
2686,12458867,14517,6816088,13330,1,100,N,N,N,CP_Units,TT_Task,DT_FixedDUR2,RV_OK,TK_Complete,PK000I131C,Receive Quotes - Transmitters,,,,0,0,0,0,120,0,0,0,,2005-04-01 00:00,2005-04-25 00:00,2007-05-08 08:00,2007-05-08 08:00,,2007-01-27 00:00,2007-01-27 00:00,,,2005-06-10 08:00,2005-06-30 17:00,,,,,PT_Normal,,,,,Bl5KfiBNRvCvVKYXOe2Rmg,,,,N,0,0,,,2007-02-01 02:42,2007-02-04 01:05,hbe4678,hbe4678,,,0
2687,12458868,14517,6816088,13330,1,100,N,N,N,CP_Units,TT_Task,DT_FixedDUR2,RV_OK,TK_Complete,PK000I131E,Eval Bids / Issue Recmd - Transmitters,,,,0,0,0,0,72,0,0,0,,2005-06-24 00:00,2005-06-30 17:00,2007-05-08 08:00,2007-05-08 08:00,,2007-01-27 00:00,2007-01-27 00:00,,,2005-06-20 08:00,2005-06-30 17:00,,,,,PT_Normal,,,,,98odh08/T/K/duU2y8ESVg,,,,N,0,0,,,2007-02-01 02:42,2007-02-04 01:05,hbe4678,hbe4678,,,0
2688,12458869,14517,6816088,13330,1,100,N,N,N,CP_Units,TT_Task,DT_FixedDUR2,RV_OK,TK_Complete,PK000I131G,Final Negotiation / Interim Award - Transmitters,,,,0,0,0,0,40,0,0,0,,2005-09-01 00:00,2005-09-06 00:00,2007-05-08 08:00,2007-05-08 08:00,,2007-01-27 00:00,2007-01-27 00:00,,,2005-09-26 08:00,2005-09-30 17:00,,,,,PT_Normal,,,,,Ihtnl6BVRomMaPY6U4drIw,,,,N,0,0,,,2007-02-01 02:42,2007-02-04 01:05,hbe4678,hbe4678,,,0
2689,12458870,14517,6816088,13330,1,100,N,N,N,CP_Units,TT_Task,DT_FixedDUR2,RV_OK,TK_Complete,PK000I131K,Issue Formal Purchase Agreement - Transmitters,,,,0,0,0,0,40,0,0,0,,2005-09-06 00:00,2006-01-02 00:00,2007-05-08 08:00,2007-05-08 08:00,,2007-01-27 00:00,2007-01-27 00:00,,,2005-10-10 08:01,2005-10-17 08:01,,,,,PT_Normal,,,,,NyU1wLZ4Trqs8CGgTHlm8Q,,,,N,0,0,,,2007-02-01 02:42,2007-02-04 01:05,hbe4678,hbe4678,,,0
2690,12458871,14517,6816088,13330,1,100,N,N,N,CP_Units,TT_Task,DT_FixedDUR2,RV_OK,TK_Active,PK000I2300,On/Off Valves - Fabricate/Exworks,,3680,0,240,0,0,0,1040,0,0,0,,2006-07-17 00:00,,2008-11-03 08:00,2008-12-12 17:00,2007-03-09 17:00,2007-01-29 08:00,2007-03-09 17:00,2007-01-29 08:00,2007-03-09 17:00,2006-07-24 08:00,2007-01-19 17:00,,2008-11-03 08:00,2008-12-12 17:00,,PT_Normal,,,,,jdvlsAupSGqVChsqz6qJTQ,UBJTUhhV5U6DU9Mv++ZYAh,,,N,0,0,,,2007-02-01 02:42,2007-02-01 02:43,hbe4678,hbe4678,2007-01-29 08:00,2007-03-09 17:00,240
2691,12458872,14517,6816088,13330,1,0,N,N,N,CP_Units,TT_Task,DT_FixedDUR2,RV_OK,TK_Active,PK000I2330,On/Off Valves - Transport & Deliver,,3680,0,360,0,0,0,400,0,0,0,,2007-01-03 08:00,,2008-12-15 08:00,2009-02-13 17:00,,2007-03-12 08:00,2007-05-11 17:00,2007-03-12 08:00,2007-05-11 17:00,2007-01-03 08:00,2007-03-13 17:00,,2008-12-15 08:00,2009-02-13 17:00,,PT_Normal,,,,,D8BcwF4/SPK2Bc7lyEL1fA,TSz0CRizXkSizPKQZsKuYB,,,N,0,0,,,2007-02-01 02:42,2007-02-01 02:43,hbe4678,hbe4678,2007-03-12 08:00,2007-05-11 17:00,360
2692,12458873,14517,6816088,13330,1,100,N,N,N,CP_Units,TT_Task,DT_FixedDUR2,RV_OK,TK_Complete,PK000I230B,Issue RFQ - On/Off Valves,,,,0,0,0,0,40,0,0,0,,2005-07-05 00:00,2005-07-07 00:00,2008-12-12 17:00,2008-12-12 17:00,,2007-01-27 00:00,2007-01-27 00:00,,,2005-07-18 08:00,2005-07-22 17:00,,,,,PT_Normal,,,,,ehntxyOlQcSo/fv/geYQLQ,0vtobuycqky+R04s322vKR,,,N,0,0,,,2007-02-01 02:42,2007-02-04 01:05,hbe4678,hbe4678,,,0
2693,12458874,14517,6816088,13330,1,100,N,N,N,CP_Units,TT_Task,DT_FixedDUR2,RV_OK,TK_Complete,PK000I230C,Receive Quotes -On/Off Valves,,,,0,0,0,0,120,0,0,0,,2005-07-08 00:00,2005-08-01 17:00,2008-12-12 17:00,2008-12-12 17:00,,2007-01-27 00:00,2007-01-27 00:00,,,2005-07-25 08:00,2005-08-12 17:00,,,,,PT_Normal,,,,,eCMVu576RResWoXEjQwGDw,CfKSQasbSEi51PbtD7JHKR,,,N,0,0,,,2007-02-01 02:42,2007-02-04 01:05,hbe4678,hbe4678,,,0
2694,12458875,14517,6816088,13330,1,100,N,N,N,CP_Units,TT_Task,DT_FixedDUR2,RV_OK,TK_Complete,PK000I230E,Eval Bids / Issue Recmd - On/Off Valves,,,,0,0,0,0,80,0,0,0,,2005-08-02 00:00,2005-09-28 00:00,2008-12-12 17:00,2008-12-12 17:00,,2007-01-27 00:00,2007-01-27 00:00,,,2005-08-16 08:00,2005-08-29 17:00,,,,,PT_Normal,,,,,EA9/aPBCSRm5FJMkmRILcg,jjD0Y8PekUGPRhGEamkCjh,,,N,0,0,,,2007-02-01 02:42,2007-02-04 01:05,hbe4678,hbe4678,,,0
2695,12458876,14517,6816088,13330,1,100,N,N,N,CP_Units,TT_Task,DT_FixedDUR2,RV_OK,TK_Complete,PK000I230G,Final Negotiation / Interim Award - On/Off Valves,,,,0,0,0,0,80,0,0,0,,2005-09-28 00:00,2005-10-03 00:00,2008-12-12 17:00,2008-12-12 17:00,,2007-01-27 00:00,2007-01-27 00:00,,,2005-10-12 08:00,2005-10-25 17:00,,,,,PT_Normal,,,,,ufbumCETQy6iA1Mi+YY9LQ,xLj9YmUjIEuYarZ4VY6UjB,,,N,0,0,,,2007-02-01 02:42,2007-02-04 01:05,hbe4678,hbe4678,,,0
2696,12458877,14517,6816088,13330,1,100,N,N,N,CP_Units,TT_Task,DT_FixedDUR2,RV_OK,TK_Complete,PK000I230K,Issue Formal Purchase Agreement. - On/Off Valves,,,,0,0,0,0,40,0,0,0,,2005-10-17 08:00,2006-01-13 00:00,2008-12-12 17:00,2008-12-12 17:00,,2007-01-27 00:00,2007-01-27 00:00,,,2005-10-17 08:00,2005-10-21 17:00,,,,,PT_Normal,,,,,qFssgOzdTu2uSyWc9ezcWQ,s63k3cwrRkOIhpN51ztA3h,,,N,0,0,,,2007-02-01 02:42,2007-02-04 01:05,hbe4678,hbe4678,,,0
2697,12458878,14517,6816088,13330,1,100,N,N,N,CP_Units,TT_Task,DT_FixedDUR2,RV_OK,TK_Complete,PK000I210B,000 Control Valves - Issue RFQ,,,,0,0,0,0,40,0,0,0,,2005-03-14 00:00,2005-03-21 00:00,2009-02-13 17:00,2009-02-13 17:00,,2007-01-27 00:00,2007-01-27 00:00,,,2005-06-03 08:00,2005-06-09 17:00,,,,,PT_Normal,,,,,tRQUBnZ9SDiKQWQWXvJp6Q,,,,N,0,0,,,2007-02-01 02:42,2007-02-04 01:05,hbe4678,hbe4678,,,0
2698,12458879,14517,6816088,13330,1,100,N,N,N,CP_Units,TT_Task,DT_FixedDUR2,RV_OK,TK_Complete,PK000I210C,000 Control Valves - Receive Quotes,,,,0,0,0,0,120,0,0,0,,2005-03-22 00:00,2005-04-19 00:00,2009-02-13 17:00,2009-02-13 17:00,,2007-01-27 00:00,2007-01-27 00:00,,,2005-06-10 08:00,2005-06-30 17:00,,,,,PT_Normal,,,,,8XOi6dqUSxySo93yUb+6gg,,,,N,0,0,,,2007-02-01 02:42,2007-02-04 01:05,hbe4678,hbe4678,,,0
2699,12458880,14517,6816088,13330,1,100,N,N,N,CP_Units,TT_Task,DT_FixedDUR2,RV_OK,TK_Complete,PK000I210E,000 Control Valves - Eval Bids / Issue Recmd,,,,0,0,0,0,72,0,0,0,,2005-06-24 00:00,2005-06-30 17:00,2009-02-13 17:00,2009-02-13 17:00,,2007-01-27 00:00,2007-01-27 00:00,,,2005-06-20 08:00,2005-06-30 17:00,,,,,PT_Normal,,,,,rE/rCrMxQhSlWIygrEqDPA,,,,N,0,0,,,2007-02-01 02:42,2007-02-04 01:05,hbe4678,hbe4678,,,0
2700,12458881,14517,6816088,13330,1,100,N,N,N,CP_Units,TT_Task,DT_FixedDUR2,RV_OK,TK_Complete,PK000I210G,Final Negotiation / Interim Award - Control Valves,,,,0,0,0,0,40,0,0,0,,2005-09-09 00:00,2005-09-09 00:00,2009-02-13 17:00,2009-02-13 17:00,,2007-01-27 00:00,2007-01-27 00:00,,,2005-09-26 08:00,2005-09-30 17:00,,,,,PT_Normal,,,,,Oq57QyUMSuehyf8bQ6+fxg,,,,N,0,0,,,2007-02-01 02:42,2007-02-04 01:05,hbe4678,hbe4678,,,0
2701,12458882,14517,6816088,13330,1,100,N,N,N,CP_Units,TT_Task,DT_FixedDUR2,RV_OK,TK_Complete,PK000I210K,000 Control Valves - Issue Formal Purchase Agreement,,,,0,0,0,0,40,0,0,0,,2005-09-09 00:00,2006-03-06 00:00,2009-02-13 17:00,2009-02-13 17:00,,2007-01-27 00:00,2007-01-27 00:00,,,2005-10-10 08:01,2005-10-17 08:01,,,,,PT_Normal,,,,,R5WNtmkCTQu/S80VLhK4OA,,,,N,0,0,,,2007-02-01 02:42,2007-02-04 01:05,hbe4678,hbe4678,,,0
2702,12458883,14517,6816088,13330,1,100,N,N,N,CP_Units,TT_Task,DT_FixedDUR2,RV_OK,TK_Complete,PK000I220B,Issue RFQ - MOV's,,,,0,0,0,0,40,0,0,0,,2005-07-05 08:00,2005-07-07 00:00,2009-01-02 17:00,2009-01-02 17:00,,2007-01-27 00:00,2007-01-27 00:00,,,2005-07-05 08:00,2005-07-11 17:00,,,,,PT_Normal,,,,,FSsUyT82SbGcmilbdz/oKA,ftZsz3uJe0uMPNbdQRJUGx,,,N,0,0,,,2007-02-01 02:42,2007-02-04 01:05,hbe4678,hbe4678,,,0
2703,12458884,14517,6816088,13330,1,100,N,N,N,CP_Units,TT_Task,DT_FixedDUR2,RV_OK,TK_Complete,PK000I220C,Receive Quotes - MOV's,,,,0,0,0,0,168,0,0,0,,2005-07-08 00:00,2005-08-02 00:00,2009-01-02 17:00,2009-01-02 17:00,,2007-01-27 00:00,2007-01-27 00:00,,,2005-07-12 08:00,2005-08-09 17:00,,,,,PT_Normal,,,,,0VkfCwDgRtqLTE4mq8rUQA,UbnhMMqv80CCvaW5VuBSux,,,N,0,0,,,2007-02-01 02:42,2007-02-04 01:05,hbe4678,hbe4678,,,0
2704,12458885,14517,6816088,13330,1,100,N,N,N,CP_Units,TT_Task,DT_FixedDUR2,RV_OK,TK_Complete,PK000I220E,Eval Bids / Issue Recmd - MOV's,,,,0,0,0,0,40,0,0,0,,2005-08-02 00:00,2005-09-27 00:00,2009-01-02 17:00,2009-01-02 17:00,,2007-01-27 00:00,2007-01-27 00:00,,,2005-08-17 08:00,2005-08-23 17:00,,,,,PT_Normal,,,,,OSpw2MKEQmSQ9MJX4zSfew,NcH4jqHKL0CvWyImykKoZR,,,N,0,0,,,2007-02-01 02:42,2007-02-04 01:05,hbe4678,hbe4678,,,0
2705,12458886,14517,6816088,13330,1,100,N,N,N,CP_Units,TT_Task,DT_FixedDUR2,RV_OK,TK_Complete,PK000I616H,Fabricate / Exworks - Steam Drum Lvl Gauges,,,,0,0,0,0,360,0,0,0,,2006-06-13 00:00,2006-09-15 00:00,2007-07-09 08:00,2007-07-09 08:00,,2007-01-27 00:00,2007-01-27 00:00,,,2006-08-21 08:00,2006-10-20 17:00,,,,,PT_Normal,,,,,fp+WLvVoQsajQnxGJlE22w,fSxAgScs+EGaSXTAZDoKQh,,,N,0,0,,,2007-02-01 02:42,2007-02-04 01:05,hbe4678,hbe4678,,,0
2706,12458887,14517,6816088,13330,1,100,N,N,N,CP_Units,TT_Task,DT_FixedDUR2,RV_OK,TK_Complete,PK000I616N,Transport & Deliver - Steam Drum Lvl Gauges,,,,0,0,0,0,400,0,0,0,2006-10-30 00:00,2006-09-18 08:00,2007-01-10 00:00,2007-07-09 08:00,2007-07-09 08:00,,2007-01-27 00:00,2007-01-27 00:00,,,2006-09-18 08:00,2006-11-24 17:00,,,,CS_MSOA,PT_Normal,,,,,R7i1I83SR7SP1a1Z182m1Q,TV+pMwGcl0uJeEpSUTp9gh,,,N,0,0,,,2007-02-01 02:42,2007-02-04 01:05,hbe4678,hbe4678,,,0
2707,12458888,14517,6816088,13330,1,100,N,N,N,CP_Units,TT_Task,DT_FixedDUR2,RV_OK,TK_Complete,PK000I616B,Issue RFQ - Steam Drum Lvl Gauges,,,,0,0,0,0,40,0,0,0,,2005-05-23 00:00,2005-05-26 00:00,2007-07-09 08:00,2007-07-09 08:00,,2007-01-27 00:00,2007-01-27 00:00,,,2005-06-03 08:00,2005-06-09 17:00,,,,,PT_Normal,,,,,ijYETg3YSB6VZqmgx7pLuQ,uieGK7KFc0Kjp9uHzoCNJh,,,N,0,0,,,2007-02-01 02:42,2007-02-04 01:05,hbe4678,hbe4678,,,0
2708,12458889,14517,6816088,13330,1,100,N,N,N,CP_Units,TT_Task,DT_FixedDUR2,RV_OK,TK_Complete,PK000I616C,Receive Quotes - Steam Drum Lvl Gauges,,,,0,0,0,0,120,0,0,0,,2005-05-27 00:00,2005-06-16 17:00,2007-07-09 08:00,2007-07-09 08:00,,2007-01-27 00:00,2007-01-27 00:00,,,2005-06-10 08:00,2005-06-30 17:00,,,,,PT_Normal,,,,,P4oUtFR2SyCU7+eXq39KKA,7iKxKwiHmkuqX6s31raojB,,,N,0,0,,,2007-02-01 02:42,2007-02-04 01:05,hbe4678,hbe4678,,,0
2709,12458890,14517,6816088,13330,1,100,N,N,N,CP_Units,TT_Task,DT_FixedDUR2,RV_OK,TK_Complete,PK000I616E,Eval Bids / Issue Recmd - Steam Drum Lvl Gauges,,,,0,0,0,0,40,0,0,0,,2005-06-21 00:00,2005-08-31 00:00,2007-07-09 08:00,2007-07-09 08:00,,2007-01-27 00:00,2007-01-27 00:00,,,2005-07-11 08:00,2005-07-15 17:00,,,,,PT_Normal,,,,,y1A5B1hpQK+/6mbvf16Feg,KqFdabMY10m/vsSHXXKooh,,,N,0,0,,,2007-02-01 02:42,2007-02-04 01:05,hbe4678,hbe4678,,,0
2710,12458891,14517,6816088,13330,1,100,N,N,N,CP_Units,TT_Task,DT_FixedDUR2,RV_OK,TK_Complete,PK000I616G,Final Negotiation / Interim Award - Steam Drum Lvl Gauges,,,,0,0,0,0,40,0,0,0,,2005-08-31 00:00,2005-09-01 00:00,2007-07-09 08:00,2007-07-09 08:00,,2007-01-27 00:00,2007-01-27 00:00,,,2005-09-29 08:00,2005-10-05 17:00,,,,,PT_Normal,,,,,A1rFSoJHSTyFw9cD0otRxA,b0ZXGm1HWUux3vzIUAa3ix,,,N,0,0,,,2007-02-01 02:42,2007-02-04 01:05,hbe4678,hbe4678,,,0
2711,12458892,14517,6816088,13330,1,100,N,N,N,CP_Units,TT_Task,DT_FixedDUR2,RV_OK,TK_Complete,PK000I616K,Issue Formal Purchase Agreement. - Steam Drum Lvl Gauges,,,,0,0,0,0,40,0,0,0,,2005-09-01 00:00,2006-01-30 00:00,2007-07-09 08:00,2007-07-09 08:00,,2007-01-27 00:00,2007-01-27 00:00,,,2005-10-10 08:01,2005-10-17 08:01,,,,,PT_Normal,,,,,WaHhHNSlToKk2SnAanrKCQ,GJxzCrvRiUylV4jkx+adux,,,N,0,0,,,2007-02-01 02:42,2007-02-04 01:05,hbe4678,hbe4678,,,0
2712,12458893,14517,6816088,13330,1,100,N,N,N,CP_Units,TT_Task,DT_FixedDUR2,RV_OK,TK_Complete,PK000I617H,Fabricate / Exworks - Magnetic Lvl Gauges,,,,0,0,0,0,360,0,0,0,,2006-06-06 00:00,2006-12-15 00:00,2007-06-22 08:00,2007-06-22 08:00,,2007-01-27 00:00,2007-01-27 00:00,,,2006-08-21 08:00,2006-10-20 17:00,,,,,PT_Normal,,,,,WzP9m929RKKM2cZtc7Cd1Q,fSxAgScs+EGaSXTAZDoKQh,,,N,0,0,,,2007-02-01 02:42,2007-02-04 01:05,hbe4678,hbe4678,,,0
2713,12458894,14517,6816088,13330,1,100,N,N,N,CP_Units,TT_Task,DT_FixedDUR2,RV_OK,TK_Active,PK000I617N,Transport & Deliver - Magnetic Lvl Gauges,,832,0,88,0,0,0,400,0,0,0,,2006-12-18 08:00,,2007-06-22 08:00,2007-07-06 17:00,,2007-01-29 08:00,2007-02-12 17:00,2007-01-29 08:00,2007-02-12 17:00,2006-12-18 08:00,2007-02-23 17:00,,2007-06-22 08:00,2007-07-06 17:00,,PT_Normal,,,,,sUjkFhIgS/iGSRnNyyJ+sg,TV+pMwGcl0uJeEpSUTp9gh,,,N,0,0,,,2007-02-01 02:42,2007-02-01 02:43,hbe4678,hbe4678,2007-01-29 08:00,2007-02-12 17:00,88
2714,12458895,14517,6816088,13330,1,100,N,N,N,CP_Units,TT_Task,DT_FixedDUR2,RV_OK,TK_Complete,PK000I617B,Issue RFQ - Magnetic Lvl Gauges,,,,0,0,0,0,40,0,0,0,,2005-05-27 00:00,2005-06-01 00:00,2007-06-22 08:00,2007-06-22 08:00,,2007-01-27 00:00,2007-01-27 00:00,,,2005-06-03 08:00,2005-06-09 17:00,,,,,PT_Normal,,,,,ygJgnrkrS0KVKxEfaHcDGw,uieGK7KFc0Kjp9uHzoCNJh,,,N,0,0,,,2007-02-01 02:42,2007-02-04 01:05,hbe4678,hbe4678,,,0
2715,12458896,14517,6816088,13330,1,100,N,N,N,CP_Units,TT_Task,DT_FixedDUR2,RV_OK,TK_Complete,PK000I617C,Receive Quotes - Magnetic Lvl Gauges,,,,0,0,0,0,120,0,0,0,,2005-06-02 00:00,2005-06-21 17:00,2007-06-22 08:00,2007-06-22 08:00,,2007-01-27 00:00,2007-01-27 00:00,,,2005-06-10 08:00,2005-06-30 17:00,,,,,PT_Normal,,,,,GLPvLU/OS1aAqV6brUCUxw,7iKxKwiHmkuqX6s31raojB,,,N,0,0,,,2007-02-01 02:42,2007-02-04 01:05,hbe4678,hbe4678,,,0
2716,12458897,14517,6816088,13330,1,100,N,N,N,CP_Units,TT_Task,DT_FixedDUR2,RV_OK,TK_Complete,PK000I617E,Eval Bids / Issue Recmd - Magnetic Lvl Gauges,,,,0,0,0,0,40,0,0,0,,2005-06-22 00:00,2005-08-31 00:00,2007-06-22 08:00,2007-06-22 08:00,,2007-01-27 00:00,2007-01-27 00:00,,,2005-07-11 08:00,2005-07-15 17:00,,,,,PT_Normal,,,,,e49M7dcOQ7WidaLq0LyQXA,KqFdabMY10m/vsSHXXKooh,,,N,0,0,,,2007-02-01 02:42,2007-02-04 01:05,hbe4678,hbe4678,,,0
2717,12458898,14517,6816088,13330,1,100,N,N,N,CP_Units,TT_Task,DT_FixedDUR2,RV_OK,TK_Complete,PK000I617G,Final Negotiation / Interim Award - Magnetic Lvl Gauges,,,,0,0,0,0,40,0,0,0,,2005-08-31 00:00,2005-09-06 00:00,2007-06-22 08:00,2007-06-22 08:00,,2007-01-27 00:00,2007-01-27 00:00,,,2005-10-06 08:00,2005-10-12 17:00,,,,,PT_Normal,,,,,deVHkR3cSnec4F07+rrK/A,b0ZXGm1HWUux3vzIUAa3ix,,,N,0,0,,,2007-02-01 02:42,2007-02-04 01:05,hbe4678,hbe4678,,,0
2718,12458899,14517,6816088,13330,1,100,N,N,N,CP_Units,TT_Task,DT_FixedDUR2,RV_OK,TK_Complete,PK000I617K,Issue Formal Purchase Agreement - Magnetic Lvl Gauges,,,,0,0,0,0,40,0,0,0,,2005-09-06 00:00,2006-02-20 00:00,2007-06-22 08:00,2007-06-22 08:00,,2007-01-27 00:00,2007-01-27 00:00,,,2005-10-10 08:01,2005-10-17 08:01,,,,,PT_Normal,,,,,vzUjVY7CQMCvIofn08TwTA,GJxzCrvRiUylV4jkx+adux,,,N,0,0,,,2007-02-01 02:42,2007-02-04 01:05,hbe4678,hbe4678,,,0
2719,12458900,14517,6816088,13330,1,0,N,N,N,CP_Units,TT_Task,DT_FixedDUR2,RV_OK,TK_Active,PK000I623H,Fabricate / Exworks -  Multi-Point Thermocouples,,672,0,8,0,0,0,440,0,0,0,,2006-06-27 00:00,,2007-05-25 08:00,2007-05-25 17:00,,2007-01-29 08:00,2007-01-29 17:00,2007-01-29 08:00,2007-01-29 17:00,2007-01-05 08:00,2007-03-22 17:00,,2007-05-25 08:00,2007-05-25 17:00,,PT_Normal,,,,,3C7yjS/+SjarmSVDUbPflA,fSxAgScs+EGaSXTAZDoKQh,,,N,0,0,,,2007-02-01 02:42,2007-02-01 02:43,hbe4678,hbe4678,2007-01-29 08:00,2007-01-29 17:00,8
2720,12458901,14517,6816088,13330,1,100,N,N,N,CP_Units,TT_Task,DT_FixedDUR2,RV_OK,TK_Complete,PK000I623B,Issue RFQ - Multi-Point Thermocouples,,,,0,0,0,0,40,0,0,0,,2005-05-23 00:00,2005-05-26 00:00,2007-05-25 08:00,2007-05-25 08:00,,2007-01-27 00:00,2007-01-27 00:00,,,2005-06-03 08:00,2005-06-09 17:00,,,,,PT_Normal,,,,,lpL9fHtiRny6t17eZ5RWlQ,uieGK7KFc0Kjp9uHzoCNJh,,,N,0,0,,,2007-02-01 02:42,2007-02-04 01:05,hbe4678,hbe4678,,,0
2721,12458902,14517,6816088,13330,1,100,N,N,N,CP_Units,TT_Task,DT_FixedDUR2,RV_OK,TK_Complete,PK000I623C,Receive Quotes - Multi-Point Thermocouples,,,,0,0,0,0,120,0,0,0,,2005-05-27 00:00,2005-08-15 00:00,2007-05-25 08:00,2007-05-25 08:00,,2007-01-27 00:00,2007-01-27 00:00,,,2005-06-03 08:00,2005-06-23 17:00,,,,,PT_Normal,,,,,RX3N5W8hS2aLdRk0TXb9Zw,7iKxKwiHmkuqX6s31raojB,,,N,0,0,,,2007-02-01 02:42,2007-02-04 01:05,hbe4678,hbe4678,,,0
2722,12458903,14517,6816088,13330,1,100,N,N,N,CP_Units,TT_Task,DT_FixedDUR2,RV_OK,TK_Complete,PK000I623E,Eval Bids / Issue Recmd - Multi-Point Thermocouples,,,,0,0,0,0,40,0,0,0,,2005-08-15 08:00,2005-08-31 00:00,2007-05-25 08:00,2007-05-25 08:00,,2007-01-27 00:00,2007-01-27 00:00,,,2005-08-15 08:00,2005-08-19 17:00,,,,,PT_Normal,,,,,WHXEu3BkS5CiOxuIWr5Svg,KqFdabMY10m/vsSHXXKooh,,,N,0,0,,,2007-02-01 02:42,2007-02-04 01:05,hbe4678,hbe4678,,,0
2723,12458904,14517,6816088,13330,1,100,N,N,N,CP_Units,TT_Task,DT_FixedDUR2,RV_OK,TK_Complete,PK000I623G,Final Negotiation / Interim Award - Multi-Point Thermocouples,,,,0,0,0,0,40,0,0,0,,2005-08-31 00:00,2005-09-06 00:00,2007-05-25 08:00,2007-05-25 08:00,,2007-01-27 00:00,2007-01-27 00:00,,,2005-10-11 08:00,2005-10-17 17:00,,,,,PT_Normal,,,,,KWZJq3vjR86vVfx3etJXCw,b0ZXGm1HWUux3vzIUAa3ix,,,N,0,0,,,2007-02-01 02:42,2007-02-04 01:05,hbe4678,hbe4678,,,0
2724,12458905,14517,6816088,13330,1,100,N,N,N,CP_Units,TT_Task,DT_FixedDUR2,RV_OK,TK_Complete,PK000PIA1D,Bulk Piping A/G & U/G - Eval Bids/Issue Recmd,,,,0,0,0,0,120,0,0,0,,2005-06-06 08:00,2005-08-01 00:00,2007-02-27 08:00,2007-02-27 08:00,,2007-01-27 00:00,2007-01-27 00:00,,,2005-06-06 08:00,2005-06-24 17:00,,,,,PT_Normal,,,,,WSPVN330TtuMGq/O6DpCMg,egIJn8XkEUeIvTHMpyQKrx,,,N,0,0,,,2007-02-01 02:42,2007-02-04 01:05,hbe4678,hbe4678,,,0
2725,12458906,14517,6816088,13330,1,0,N,N,N,CP_Units,TT_Task,DT_FixedDUR2,RV_OK,TK_NotStart,PK000I612H,Fabricate / Exworks - Differential Pressure Gauges,,224,0,296,0,0,0,408,0,0,0,,,,2007-03-08 08:00,2007-04-27 17:00,,2007-01-29 08:00,2007-03-20 17:00,2007-01-29 08:00,2007-03-20 17:00,2007-01-29 08:00,2007-04-09 17:00,,2007-03-08 08:00,2007-04-27 17:00,,PT_Normal,,,,,xklpu3r2SpGFUzYqR+T84A,fSxAgScs+EGaSXTAZDoKQh,,,N,0,0,,,2007-02-01 02:42,2007-02-01 02:43,hbe4678,hbe4678,2007-01-29 08:00,2007-03-20 17:00,296
2726,12458907,14517,6816088,13330,1,0,N,N,N,CP_Units,TT_Task,DT_FixedDUR2,RV_OK,TK_NotStart,PK000I612N,Transport & Deliver - Differential Pressure Gauges,,224,0,400,0,0,0,400,0,0,0,,,,2007-04-30 08:00,2007-07-06 17:00,,2007-03-21 08:00,2007-05-29 17:00,2007-03-21 08:00,2007-05-29 17:00,2007-03-21 08:00,2007-05-29 17:00,,2007-04-30 08:00,2007-07-06 17:00,,PT_Normal,,,,,GeeAxnB2St6MCtVsUmTBcA,TV+pMwGcl0uJeEpSUTp9gh,,,N,0,0,,,2007-02-01 02:42,2007-02-01 02:43,hbe4678,hbe4678,2007-03-21 08:00,2007-05-29 17:00,400
2727,12458908,14517,6816088,13330,1,100,N,N,N,CP_Units,TT_Task,DT_FixedDUR2,RV_OK,TK_Complete,PK000I612B,Issue RFQ - Differential Pressure Gauges,,,,0,0,0,0,40,0,0,0,,2005-05-26 00:00,2005-05-31 00:00,2007-03-08 08:00,2007-03-08 08:00,,2007-01-27 00:00,2007-01-27 00:00,,,2005-06-03 08:00,2005-06-09 17:00,,,,,PT_Normal,,,,,YAnO0GpxQzeNQcNRxtRg0A,uieGK7KFc0Kjp9uHzoCNJh,,,N,0,0,,,2007-02-01 02:42,2007-02-04 01:05,hbe4678,hbe4678,,,0
2728,12458909,14517,6816088,13330,1,100,N,N,N,CP_Units,TT_Task,DT_FixedDUR2,RV_OK,TK_Complete,PK000I612C,Receive Quotes - Differential Pressure Gauges,,,,0,0,0,0,120,0,0,0,,2005-06-01 00:00,2005-06-21 17:00,2007-03-08 08:00,2007-03-08 08:00,,2007-01-27 00:00,2007-01-27 00:00,,,2005-06-10 08:00,2005-06-30 17:00,,,,,PT_Normal,,,,,Se4PMvs+R1eaOv8QdOZizw,7iKxKwiHmkuqX6s31raojB,,,N,0,0,,,2007-02-01 02:42,2007-02-04 01:05,hbe4678,hbe4678,,,0
2729,12458910,14517,6816088,13330,1,100,N,N,N,CP_Units,TT_Task,DT_FixedDUR2,RV_OK,TK_Complete,PK000I612E,Eval Bids / Issue Recmd - Differential Pressure Gauges,,,,0,0,0,0,40,0,0,0,,2005-06-27 08:00,2005-08-31 00:00,2007-03-08 08:00,2007-03-08 08:00,,2007-01-27 00:00,2007-01-27 00:00,,,2005-06-27 08:00,2005-07-05 17:00,,,,,PT_Normal,,,,,Kjs3SoK0QGGIc/4rDiDYiQ,KqFdabMY10m/vsSHXXKooh,,,N,0,0,,,2007-02-01 02:42,2007-02-04 01:05,hbe4678,hbe4678,,,0
2730,12458911,14517,6816088,13330,1,100,N,N,N,CP_Units,TT_Task,DT_FixedDUR2,RV_OK,TK_Complete,PK000I612G,Final Negotiation / Interim Award - Differential Pressure Gauges,,,,0,0,0,0,40,0,0,0,,2005-08-31 00:00,2005-09-01 00:00,2007-03-08 08:00,2007-03-08 08:00,,2007-01-27 00:00,2007-01-27 00:00,,,2005-10-06 08:00,2005-10-12 17:00,,,,,PT_Normal,,,,,6/wsVmGyTSSOdlJeZhe4Zg,b0ZXGm1HWUux3vzIUAa3ix,,,N,0,0,,,2007-02-01 02:42,2007-02-04 01:05,hbe4678,hbe4678,,,0
2731,12458912,14517,6816088,13330,1,100,N,N,N,CP_Units,TT_Task,DT_FixedDUR2,RV_OK,TK_Complete,PK000I612K,Issue Formal Purchase Agreement - Differential Pressure Gauges,,,,0,0,0,0,40,0,0,0,,2005-09-01 00:00,2006-03-08 17:00,2007-03-08 08:00,2007-03-08 08:00,,2007-01-27 00:00,2007-01-27 00:00,,,2005-10-10 08:01,2005-10-17 08:01,,,,,PT_Normal,,,,,//0I9+EBQTqmu1PJRAHN2w,GJxzCrvRiUylV4jkx+adux,,,N,0,0,,,2007-02-01 02:42,2007-02-04 01:05,hbe4678,hbe4678,,,0
2732,12458913,14517,6816088,13330,1,100,N,N,N,CP_Units,TT_Task,DT_FixedDUR2,RV_OK,TK_Complete,PK000I611H,Fabricate / Exworks - Pressure Gauges - ISBL,,,,0,0,0,0,400,0,0,0,,2006-10-19 08:00,2006-12-19 00:00,2007-07-02 08:00,2007-07-02 08:00,,2007-01-27 00:00,2007-01-27 00:00,,,2006-10-19 08:00,2006-12-27 17:00,,,,,PT_Normal,,,,,PksXqH4cTgKKjz5IDeO3vA,fSxAgScs+EGaSXTAZDoKQh,,,N,0,0,,,2007-02-01 02:42,2007-02-04 01:05,hbe4678,hbe4678,,,0
2733,12458914,14517,6816088,13330,1,100,N,N,N,CP_Units,TT_Task,DT_FixedDUR2,RV_OK,TK_Active,PK000I611N,Transport & Deliver - Pressure Gauges - ISBL,,880,0,40,0,0,0,400,0,0,0,,2006-12-20 08:00,,2007-07-02 08:00,2007-07-06 17:00,,2007-01-29 08:00,2007-02-02 17:00,2007-01-29 08:00,2007-02-02 17:00,2006-12-20 08:00,2007-02-27 17:00,,2007-07-02 08:00,2007-07-06 17:00,,PT_Normal,,,,,u6/7UkDJTVKeRPeqKKT3Mw,TV+pMwGcl0uJeEpSUTp9gh,,,N,0,0,,,2007-02-01 02:42,2007-02-01 02:43,hbe4678,hbe4678,2007-01-29 08:00,2007-02-02 17:00,40
2734,12458915,14517,6816088,13330,1,100,N,N,N,CP_Units,TT_Task,DT_FixedDUR2,RV_OK,TK_Complete,PK000I611B,Issue RFQ - Pressure Gauges,,,,0,0,0,0,40,0,0,0,,2005-05-25 00:00,2005-05-31 00:00,2007-04-19 08:00,2007-04-19 08:00,,2007-01-27 00:00,2007-01-27 00:00,,,2005-06-03 08:00,2005-06-09 17:00,,,,,PT_Normal,,,,,vlGAz4CEQ8m56Cavz+UCzw,uieGK7KFc0Kjp9uHzoCNJh,,,N,0,0,,,2007-02-01 02:42,2007-02-04 01:05,hbe4678,hbe4678,,,0
2735,12458916,14517,6816088,13330,1,100,N,N,N,CP_Units,TT_Task,DT_FixedDUR2,RV_OK,TK_Complete,PK000I611C,Receive Quotes - Pressure Gauges,,,,0,0,0,0,120,0,0,0,,2005-06-01 00:00,2005-06-21 17:00,2007-04-19 08:00,2007-04-19 08:00,,2007-01-27 00:00,2007-01-27 00:00,,,2005-06-10 08:00,2005-06-30 17:00,,,,,PT_Normal,,,,,CRlSbB+2Tf2tGKr8j+xasQ,7iKxKwiHmkuqX6s31raojB,,,N,0,0,,,2007-02-01 02:42,2007-02-04 01:05,hbe4678,hbe4678,,,0
2736,12458917,14517,6816088,13330,1,100,N,N,N,CP_Units,TT_Task,DT_FixedDUR2,RV_OK,TK_Complete,PK000I611E,Eval Bids / Issue Recmd - Pressure Gauges,,,,0,0,0,0,40,0,0,0,,2005-06-22 00:00,2005-08-31 00:00,2007-04-19 08:00,2007-04-19 08:00,,2007-01-27 00:00,2007-01-27 00:00,,,2005-07-11 08:00,2005-07-15 17:00,,,,,PT_Normal,,,,,H4WtQysZRTiO8WoYCmbvWA,KqFdabMY10m/vsSHXXKooh,,,N,0,0,,,2007-02-01 02:42,2007-02-04 01:05,hbe4678,hbe4678,,,0
2737,12458918,14517,6816088,13330,1,100,N,N,N,CP_Units,TT_Task,DT_FixedDUR2,RV_OK,TK_Complete,PK000I611G,Final Negotiation / Interim Award - Pressure Gauges,,,,0,0,0,0,40,0,0,0,,2005-08-31 00:00,2005-09-06 00:00,2007-04-19 08:00,2007-04-19 08:00,,2007-01-27 00:00,2007-01-27 00:00,,,2005-09-26 08:00,2005-09-30 17:00,,,,,PT_Normal,,,,,KRkKJqh5RUO835GE23o09w,b0ZXGm1HWUux3vzIUAa3ix,,,N,0,0,,,2007-02-01 02:42,2007-02-04 01:05,hbe4678,hbe4678,,,0
2738,12458919,14517,6816088,13330,1,100,N,N,N,CP_Units,TT_Task,DT_FixedDUR2,RV_OK,TK_Complete,PK000I611K,Issue Formal Purchase Agreement - Pressure Gauges,,,,0,0,0,0,40,0,0,0,,2005-09-06 00:00,2006-03-08 17:00,2007-04-19 08:00,2007-04-19 08:00,,2007-01-27 00:00,2007-01-27 00:00,,,2005-10-10 08:01,2005-10-17 08:01,,,,,PT_Normal,,,,,O5F4Gnk8QkeDB5G5XnnzvA,GJxzCrvRiUylV4jkx+adux,,,N,0,0,,,2007-02-01 02:42,2007-02-04 01:05,hbe4678,hbe4678,,,0
2739,12458920,14517,6816088,13330,1,100,N,N,N,CP_Units,TT_Task,DT_FixedDUR2,RV_OK,TK_Complete,PK000I618B,Issue RFQ - Temperature Gauges,,,,0,0,0,0,40,0,0,0,,2005-05-26 00:00,2005-05-31 00:00,2009-04-27 00:00,2009-04-27 00:00,,2007-01-27 00:00,2007-01-27 00:00,,,2005-06-03 08:00,2005-06-09 17:00,,,,,PT_Normal,,,,,h+2ymPkjSZyoqYW68QQzPA,uieGK7KFc0Kjp9uHzoCNJh,,,N,0,0,,,2007-02-01 02:42,2007-02-04 01:05,hbe4678,hbe4678,,,0
2740,12458921,14517,6816088,13330,1,100,N,N,N,CP_Units,TT_Task,DT_FixedDUR2,RV_OK,TK_Complete,PK000I618C,Receive Quotes - Temperature Gauges,,,,0,0,0,0,120,0,0,0,,2005-06-01 00:00,2005-08-11 00:00,2009-04-27 00:00,2009-04-27 00:00,,2007-01-27 00:00,2007-01-27 00:00,,,2005-06-10 08:00,2005-06-30 17:00,,,,,PT_Normal,,,,,lJBu3U4BTI+WI6/QC5qZag,7iKxKwiHmkuqX6s31raojB,,,N,0,0,,,2007-02-01 02:42,2007-02-04 01:05,hbe4678,hbe4678,,,0
2741,12458922,14517,6816088,13330,1,100,N,N,N,CP_Units,TT_Task,DT_FixedDUR2,RV_OK,TK_Complete,PK000I618E,Eval Bids / Issue Recmd - Temperature Gauges,,,,0,0,0,0,40,0,0,0,,2005-08-11 00:00,2005-08-31 00:00,2009-04-27 00:00,2009-04-27 00:00,,2007-01-27 00:00,2007-01-27 00:00,,,2005-08-15 08:00,2005-08-19 17:00,,,,,PT_Normal,,,,,QEgM8QHGQim9NTcuwWKEsw,KqFdabMY10m/vsSHXXKooh,,,N,0,0,,,2007-02-01 02:42,2007-02-04 01:05,hbe4678,hbe4678,,,0
2742,12458923,14517,6816088,13330,1,100,N,N,N,CP_Units,TT_Task,DT_FixedDUR2,RV_OK,TK_Complete,PK000I112B,Issue RFQ - Venturis,,,,0,0,0,0,40,0,0,0,,2005-05-23 00:00,2005-05-26 00:00,2006-12-25 08:00,2006-12-25 08:00,,2007-01-27 00:00,2007-01-27 00:00,,,2005-06-03 08:00,2005-06-09 17:00,,,,,PT_Normal,,,,,Fz+a1tTzQhW4PVKSVRObWg,ftZsz3uJe0uMPNbdQRJUGx,,,N,0,0,,,2007-02-01 02:42,2007-02-04 01:05,hbe4678,hbe4678,,,0
2743,12458924,14517,6816088,13330,1,100,N,N,N,CP_Units,TT_Task,DT_FixedDUR2,RV_OK,TK_Complete,PK000I110B,Issue RFQ - Orific Plates,,,,0,0,0,0,40,0,0,0,,2005-05-23 00:00,2005-05-26 00:00,2006-12-25 08:00,2006-12-25 08:00,,2007-01-27 00:00,2007-01-27 00:00,,,2005-06-03 08:00,2005-06-09 17:00,,,,,PT_Normal,,,,,hVHsL+xjRnCACWcJSYeGCw,ftZsz3uJe0uMPNbdQRJUGx,,,N,0,0,,,2007-02-01 02:42,2007-02-04 01:05,hbe4678,hbe4678,,,0
2744,12458925,14517,6816088,13330,1,100,N,N,N,CP_Units,TT_Task,DT_FixedDUR2,RV_OK,TK_Complete,PK000I110C,Receive Quotes - Orific Plates,,,,0,0,0,0,120,0,0,0,,2005-05-27 00:00,2005-06-20 00:00,2006-12-25 08:00,2006-12-25 08:00,,2007-01-27 00:00,2007-01-27 00:00,,,2005-06-10 08:00,2005-06-30 17:00,,,,,PT_Normal,,,,,+z6fCJo6R8iGih6MVmK7Lw,UbnhMMqv80CCvaW5VuBSux,,,N,0,0,,,2007-02-01 02:42,2007-02-04 01:05,hbe4678,hbe4678,,,0
2745,12458926,14517,6816088,13330,1,100,N,N,N,CP_Units,TT_Task,DT_FixedDUR2,RV_OK,TK_Complete,PK000I110E,Eval Bids / Issue Recmd - Orific Plates,,,,0,0,0,0,40,0,0,0,,2005-06-21 00:00,2005-08-31 00:00,2006-12-25 08:00,2006-12-25 08:00,,2007-01-27 00:00,2007-01-27 00:00,,,2005-07-07 08:00,2005-07-13 17:00,,,,,PT_Normal,,,,,5hjt9UDMRJmpXjxjTIAdjA,NcH4jqHKL0CvWyImykKoZR,,,N,0,0,,,2007-02-01 02:42,2007-02-04 01:05,hbe4678,hbe4678,,,0
2746,12458927,14517,6816088,13330,1,100,N,N,N,CP_Units,TT_Task,DT_FixedDUR2,RV_OK,TK_Complete,PK000I110G,Final Negotiation / Interim Award - Orific Plates,,,,0,0,0,0,40,0,0,0,,2005-08-31 00:00,2005-09-01 00:00,2006-12-25 08:00,2006-12-25 08:00,,2007-01-27 00:00,2007-01-27 00:00,,,2005-09-29 08:00,2005-10-05 17:00,,,,,PT_Normal,,,,,MZSsQr1/Qf+rW8y74do/SQ,PfHcQO8LlEGvMqQgnHsmeB,,,N,0,0,,,2007-02-01 02:42,2007-02-04 01:05,hbe4678,hbe4678,,,0
2747,12458928,14517,6816088,13330,1,100,N,N,N,CP_Units,TT_Task,DT_FixedDUR2,RV_OK,TK_Complete,PK000I110K,Issue Formal Purchase Agreement. - Orific Plates,,,,0,0,0,0,40,0,0,0,,2005-09-01 00:00,2005-12-15 00:00,2009-01-16 08:00,2009-01-16 08:00,,2007-01-27 00:00,2007-01-27 00:00,,,2005-10-10 08:01,2005-10-17 08:01,,,,,PT_Normal,,,,,Oc0cYAOKQ4Kd7cHhJpuV2Q,SkgL68oI3Eql8cUZFCmFvx,,,N,0,0,,,2007-02-01 02:42,2007-02-04 01:05,hbe4678,hbe4678,,,0
2748,12458929,14517,6816088,13330,1,100,N,N,N,CP_Units,TT_Task,DT_FixedDUR2,RV_OK,TK_Complete,PK000I1100,020 Orific Plates - Fabricate/Exworks,,,,0,0,0,0,488,0,0,0,,2006-03-16 00:00,2006-08-01 00:00,2009-02-15 08:01,2009-02-15 08:01,,2007-01-27 00:00,2007-01-27 00:00,,,2006-05-22 08:00,2006-08-14 17:00,,,,,PT_Normal,,,,,VWOnnylmTPa3YHWHDk7gxw,upK8MONQfkGSKcmxPsAPKR,,,N,0,0,,,2007-02-01 02:42,2007-02-04 01:05,hbe4678,hbe4678,,,0
2749,12458930,14517,6816088,13330,1,100,N,N,N,CP_Units,TT_Task,DT_FixedDUR2,RV_OK,TK_Complete,PK000I1103,020 Orific Plates - Transport & Deliver,,,,0,0,0,0,400,0,0,0,,2006-08-02 00:00,2006-12-07 00:00,2009-02-15 08:01,2009-02-15 08:01,,2007-01-27 00:00,2007-01-27 00:00,,,2006-08-03 08:00,2006-10-11 17:00,,,,,PT_Normal,,,,,nXJ4GCenT5GSL7SxECO3Ig,PAHuaU6R90WEX+AAslXW9h,,,N,0,0,,,2007-02-01 02:42,2007-02-04 01:05,hbe4678,hbe4678,,,0
2750,12458931,14517,6816088,13330,1,0,N,N,N,CP_Units,TT_Task,DT_FixedDUR2,RV_OK,TK_Active,PK000I621H,Fabricate / Exworks - Temperature Elements,,248,0,432,0,0,0,568,0,0,0,,2006-09-05 00:00,,2007-03-13 08:00,2007-05-25 17:00,2007-04-12 17:00,2007-01-29 08:00,2007-04-12 17:00,2007-01-29 08:00,2007-04-12 17:00,2006-08-04 08:00,2006-11-10 17:00,,2007-03-13 08:00,2007-05-25 17:00,,PT_Normal,,,,,OtqaqkLtSgCUfh4QXtw4/w,fSxAgScs+EGaSXTAZDoKQh,,,N,0,0,,,2007-02-01 02:42,2007-02-01 02:43,hbe4678,hbe4678,2007-01-29 08:00,2007-04-12 17:00,432
2751,12458932,14517,6816088,13330,1,0,N,N,N,CP_Units,TT_Task,DT_FixedDUR2,RV_OK,TK_NotStart,PK000I621N,Transport & Deliver - Temperature Elements,,312,72,176,0,0,0,400,0,0,0,2007-01-02 00:00,,,2007-06-07 08:00,2007-07-06 17:00,,2007-04-13 08:00,2007-05-14 17:00,2007-04-13 08:00,2007-05-14 17:00,2007-04-13 08:00,2007-06-21 17:00,,2007-06-07 08:00,2007-07-06 17:00,CS_MSOA,PT_Normal,,,,,mKaFr+vSTfiOgbQDJbcDTw,TV+pMwGcl0uJeEpSUTp9gh,,,N,0,0,,,2007-02-01 02:42,2007-02-01 02:43,hbe4678,hbe4678,2007-04-13 08:00,2007-05-14 17:00,176
2752,12458933,14517,6816088,13330,1,100,N,N,N,CP_Units,TT_Task,DT_FixedDUR2,RV_OK,TK_Complete,PK000I621B,Issue RFQ - Temperature Elements,,,,0,0,0,0,40,0,0,0,,2005-05-26 00:00,2005-05-31 00:00,2007-03-13 08:00,2007-03-13 08:00,,2007-01-27 00:00,2007-01-27 00:00,,,2005-06-03 08:00,2005-06-09 17:00,,,,,PT_Normal,,,,,jkQoleSwSZ+H3YkQTown8Q,uieGK7KFc0Kjp9uHzoCNJh,,,N,0,0,,,2007-02-01 02:42,2007-02-04 01:05,hbe4678,hbe4678,,,0
2753,12458934,14517,6816088,13330,1,100,N,N,N,CP_Units,TT_Task,DT_FixedDUR2,RV_OK,TK_Complete,PK000I621C,Receive Quotes - Temperature Elements,,,,0,0,0,0,120,0,0,0,,2005-06-01 00:00,2005-08-10 00:00,2007-03-13 08:00,2007-03-13 08:00,,2007-01-27 00:00,2007-01-27 00:00,,,2005-06-03 08:00,2005-06-23 17:00,,,,,PT_Normal,,,,,ZLFWELrkSZGfE4FMerVdHQ,7iKxKwiHmkuqX6s31raojB,,,N,0,0,,,2007-02-01 02:42,2007-02-04 01:05,hbe4678,hbe4678,,,0
2754,12458935,14517,6816088,13330,1,100,N,N,N,CP_Units,TT_Task,DT_FixedDUR2,RV_OK,TK_Complete,PK000I621E,Eval Bids / Issue Recmd - Temperature Elements,,,,0,0,0,0,40,0,0,0,,2005-06-21 00:00,2005-08-31 00:00,2007-03-13 08:00,2007-03-13 08:00,,2007-01-27 00:00,2007-01-27 00:00,,,2005-07-18 08:00,2005-07-22 17:00,,,,,PT_Normal,,,,,+W6Ps549S769vPnCGijBAw,KqFdabMY10m/vsSHXXKooh,,,N,0,0,,,2007-02-01 02:42,2007-02-04 01:05,hbe4678,hbe4678,,,0
2755,12458936,14517,6816088,13330,1,100,N,N,N,CP_Units,TT_Task,DT_FixedDUR2,RV_OK,TK_Complete,PK000I621G,Final Negotiation / Interim Award - Temperature Elements,,,,0,0,0,0,40,0,0,0,,2005-08-31 00:00,2005-09-06 00:00,2007-03-13 08:00,2007-03-13 08:00,,2007-01-27 00:00,2007-01-27 00:00,,,2005-10-11 08:00,2005-10-17 17:00,,,,,PT_Normal,,,,,/X/4RHs7TJWyUu5p+PT2Rw,b0ZXGm1HWUux3vzIUAa3ix,,,N,0,0,,,2007-02-01 02:42,2007-02-04 01:05,hbe4678,hbe4678,,,0
2756,12458937,14517,6816088,13330,1,100,N,N,N,CP_Units,TT_Task,DT_FixedDUR2,RV_OK,TK_Complete,PK000I621K,Issue Formal Purchase Agreement - Temperature Elements,,,,0,0,0,0,40,0,0,0,,2005-09-06 00:00,2006-01-30 00:00,2007-03-13 08:00,2007-03-13 08:00,,2007-01-27 00:00,2007-01-27 00:00,,,2005-10-10 08:01,2005-10-17 08:01,,,,,PT_Normal,,,,,Mq1SLc21T1G+GvW2lZP0mA,GJxzCrvRiUylV4jkx+adux,,,N,0,0,,,2007-02-01 02:42,2007-02-04 01:05,hbe4678,hbe4678,,,0
2757,12458938,14517,6816088,13330,1,0,N,N,N,CP_Units,TT_Task,DT_FixedDUR2,RV_OK,TK_Active,PK000PTA0J,Engineered Pipe Supports - Transport,,464,0,248,0,0,0,400,0,0,0,,2007-01-01 08:01,,2007-04-19 08:00,2007-05-31 17:00,2007-03-12 17:00,2007-01-29 08:00,2007-03-12 17:00,2007-01-29 08:00,2007-03-12 17:00,2007-01-01 08:01,2007-03-12 08:01,,2007-04-19 08:00,2007-05-31 17:00,,PT_Normal,,,,,kMA1poxtTGWJ6efHu2KWlQ,40AIwgkJ+0CsOLBRAjMMiB,,,N,0,0,,,2007-02-01 02:42,2007-02-01 02:43,hbe4678,hbe4678,2007-01-29 08:00,2007-03-12 17:00,248
2758,12458939,14517,6816088,13329,0,0,N,N,N,CP_Units,TT_FinMile,DT_FixedDrtn,RV_OK,TK_NotStart,PK000PTA0K,Engineered Pipe Supports - Receive at Site,,552,320.016666666667,0,0,0,0,0,0,0,0,,,,2007-05-31 17:00,2007-05-31 17:00,,2007-03-12 17:00,2007-03-12 17:00,2007-03-12 17:00,2007-03-12 17:00,2007-03-12 17:00,2007-03-12 17:00,,2007-05-31 17:00,2007-05-31 17:00,,PT_Normal,,,,,se+Yv6JeTBSD9Ml4tCkrvA,K70vmBOBD06UoPty1jHwFh,,,N,0,0,,,2007-02-01 02:42,2007-02-04 01:05,hbe4678,hbe4678,2007-03-12 17:00,2007-03-12 17:00,0
2759,12458940,14517,6816088,13330,1,100,N,N,N,CP_Units,TT_Task,DT_FixedDUR2,RV_OK,TK_Complete,PK000PIA1G,"Bulk Piping A/G & U/G - Fab/Exworks (CS, SS, U/G)",,,,0,0,0,0,800,0,0,0,,2005-09-09 00:00,2006-05-01 00:00,2007-02-27 08:00,2007-02-27 08:00,,2007-01-27 00:00,2007-01-27 00:00,,,2005-11-08 08:00,2006-03-29 17:00,,,,,PT_Normal,,,,,FI/PX11FSwCWvnlNg3JZEg,F40qxtnFSEGLsqa2aDoUOR,,,N,0,0,,,2007-02-01 02:42,2007-02-04 01:05,hbe4678,hbe4678,,,0
2760,12458941,14517,6816088,13330,1,100,N,N,N,CP_Units,TT_Task,DT_FixedDUR2,RV_OK,TK_Complete,PK000PIA1H,"Bulk Piping A/G & U/G - Transport / Delivery (First CS,SS,U/G)",,,,0,0,0,0,400,0,0,0,,2006-05-02 00:00,2006-07-03 00:00,2007-02-27 08:00,2007-02-27 08:00,,2007-01-27 00:00,2007-01-27 00:00,,,2006-06-08 08:00,2006-08-16 17:00,,,,,PT_Normal,,,,,tkMHY858TPWvHnEnRAytZg,P10PNPVekEeGQHFaH2pCmx,,,N,0,0,,,2007-02-01 02:42,2007-02-04 01:05,hbe4678,hbe4678,,,0
2761,12458942,14517,6816088,13330,1,100,N,N,N,CP_Units,TT_Task,DT_FixedDUR2,RV_OK,TK_Complete,PK000PIA1A,Bulk Piping A/G & U/G - Issue REQ/RFQ to Vend,,,,0,0,0,0,160,0,0,0,,2005-04-18 00:00,2005-04-20 00:00,2007-02-27 08:00,2007-02-27 08:00,,2007-01-27 00:00,2007-01-27 00:00,,,2005-05-11 08:00,2005-06-08 17:00,,,,,PT_Normal,,,,,aCbH/QCjTCi9cOxowLaXLQ,fKoUpA3X90q/0g33FnvivR,,,N,0,0,,,2007-02-01 02:42,2007-02-04 01:05,hbe4678,hbe4678,,,0
2762,12458943,14517,6816088,13330,1,100,N,N,N,CP_Units,TT_Task,DT_FixedDUR2,RV_OK,TK_Complete,PK000PIA1B,Bulk Piping A/G & U/G - Receive Bids,,,,0,0,0,0,80,0,0,0,,2005-04-21 00:00,2005-06-03 17:00,2007-02-27 08:00,2007-02-27 08:00,,2007-01-27 00:00,2007-01-27 00:00,,,2005-06-09 08:00,2005-06-22 17:00,,,,,PT_Normal,,,,,z+Ud4UOHR6O/Vjy0EKVcNw,DZcfWRllYUmG1gfP5h/SFR,,,N,0,0,,,2007-02-01 02:42,2007-02-04 01:05,hbe4678,hbe4678,,,0
2763,12458944,14517,6816088,13330,1,100,N,N,N,CP_Units,TT_Task,DT_FixedDUR2,RV_OK,TK_Complete,PK000MB34H,Receive Quotes for MB340,,,,0,0,0,0,120,0,0,0,,2005-08-03 00:00,2005-08-24 00:00,2007-10-27 08:01,2007-10-27 08:01,,2007-01-27 00:00,2007-01-27 00:00,,,2005-08-05 08:00,2005-08-25 17:00,,,,,PT_Normal,,,,,blOntNVxQjeTK7Vr4WlcKA,,,,N,0,0,,,2007-02-01 02:42,2007-02-04 01:05,hbe4678,hbe4678,,,0
2764,12458945,14517,6816088,13330,1,100,N,N,N,CP_Units,TT_Task,DT_FixedDUR2,RV_OK,TK_Complete,PK000MB21K,MB212 - Fabricate/PO Promise Equip. 101-B Siding,,,,0,0,0,0,480,0,0,0,,2005-12-08 00:00,2006-04-03 00:00,2007-12-17 08:01,2007-12-17 08:01,,2007-01-27 00:00,2007-01-27 00:00,,,2006-02-06 08:00,2006-04-28 17:00,,,,,PT_Normal,,,,,dNmHV9GCRmKVbOwbEG5tlA,,,,N,0,0,,,2007-02-01 02:42,2007-02-04 01:05,hbe4678,hbe4678,,,0
2765,12458946,14517,6816088,13330,1,100,N,N,N,CP_Units,TT_Task,DT_FixedDUR2,RV_OK,TK_Complete,PK000MB21O,Transport & Deliver of Equip. 101-B Siding,,,,0,0,0,0,400,0,0,0,,2006-08-16 00:00,2006-09-14 00:00,2007-12-17 08:01,2007-12-17 08:01,,2007-01-27 00:00,2007-01-27 00:00,,,2006-09-04 08:00,2006-11-10 17:00,,,,,PT_Normal,,,,,qFfR0d4UQB+okmL+haYBjw,,,,N,0,0,,,2007-02-01 02:42,2007-02-04 01:05,hbe4678,hbe4678,,,0
2766,12458947,14517,6816088,13330,1,100,N,N,N,CP_Units,TT_Task,DT_FixedDUR2,RV_OK,TK_Complete,PK000MB21P,Issue Formal P.O. for  MB212,,,,0,0,0,0,24,0,0,0,,2005-12-08 00:00,2005-12-22 00:00,2007-12-17 08:01,2007-12-17 08:01,,2007-01-27 00:00,2007-01-27 00:00,,,2006-02-06 08:00,2006-02-08 17:00,,,,,PT_Normal,,,,,ZpVuTrLWSkmVFYkaUT/kEA,,,,N,0,0,,,2007-02-01 02:42,2007-02-04 01:05,hbe4678,hbe4678,,,0
2767,12458948,14517,6816088,13330,1,100,N,N,N,CP_Units,TT_Task,DT_FixedDUR2,RV_OK,TK_Complete,+,MB333 - Issue RFQ 101-B,,,,0,0,0,0,24,0,0,0,,2005-05-27 00:00,2005-06-02 00:00,2007-07-02 08:01,2007-07-02 08:01,,2007-01-27 00:00,2007-01-27 00:00,,,2005-06-06 08:00,2005-06-08 17:00,,,,,PT_Normal,,,,,JCsoVpcLQs244K8U5B+x7Q,,,,N,0,0,,,2007-02-01 02:42,2007-02-04 01:05,hbe4678,hbe4678,,,0
2768,12458949,14517,6816088,13330,1,100,N,N,N,CP_Units,TT_Task,DT_FixedDUR2,RV_OK,TK_Complete,PK000MB21G,Issue MB212 RFQ,,,,0,0,0,0,24,0,0,0,,2005-07-27 00:00,2005-08-22 00:00,2007-07-02 08:01,2007-07-02 08:01,,2007-01-27 00:00,2007-01-27 00:00,,,2005-06-27 08:00,2005-06-29 17:00,,,,,PT_Normal,,,,,FzHR87SeTAeZeXscc2vvnA,,,,N,0,0,,,2007-02-01 02:42,2007-02-04 01:05,hbe4678,hbe4678,,,0
2769,12458950,14517,6816088,13330,1,100,N,N,N,CP_Units,TT_Task,DT_FixedDUR2,RV_OK,TK_Complete,PK000MB21H,Receive Quotes for MB212,,,,0,0,0,0,120,0,0,0,,2005-08-22 00:00,2005-09-27 17:00,2007-07-02 08:01,2007-07-02 08:01,,2007-01-27 00:00,2007-01-27 00:00,,,2005-08-03 08:00,2005-08-23 17:00,,,,,PT_Normal,,,,,MiZvt0lLSjCk8QVTLWsqMQ,,,,N,0,0,,,2007-02-01 02:42,2007-02-04 01:05,hbe4678,hbe4678,,,0
2770,12458951,14517,6816088,13330,1,100,N,N,N,CP_Units,TT_Task,DT_FixedDUR2,RV_OK,TK_Complete,PK000MB21I,Eval Bids & Issue Recmd MB212,,,,0,0,0,0,120,0,0,0,,2005-12-05 08:00,2005-12-07 00:00,2007-07-02 08:01,2007-07-02 08:01,,2007-01-27 00:00,2007-01-27 00:00,,,2005-12-05 08:00,2005-12-23 17:00,,,,,PT_Normal,,,,,/T+GNubJQKmL+XA897nfNw,,,,N,0,0,,,2007-02-01 02:42,2007-02-04 01:05,hbe4678,hbe4678,,,0
2771,12458952,14517,6816088,13330,1,100,N,N,N,CP_Units,TT_Task,DT_FixedDUR2,RV_OK,TK_Complete,PK000MB21J,Final Negotiate/Interim Award - MB212,,,,0,0,0,0,24,0,0,0,,2005-12-07 00:00,2005-12-08 00:00,2007-07-02 08:01,2007-07-02 08:01,,2007-01-27 00:00,2007-01-27 00:00,,,2006-02-01 08:01,2006-02-06 08:01,,,,,PT_Normal,,,,,0LkkWaIAScSc2mCHgdC/7g,,,,N,0,0,,,2007-02-01 02:42,2007-02-04 01:05,hbe4678,hbe4678,,,0
2772,12458953,14517,6816088,13330,1,0,N,N,N,CP_Units,TT_Task,DT_FixedDUR2,RV_OK,TK_NotStart,PK000IC35N,DCS - Transport (Hold for Field Request),,680,0,240,0,0,0,400,0,0,0,,,,2007-05-28 08:00,2007-07-06 17:00,,2007-01-29 08:00,2007-03-09 17:00,2007-01-29 08:00,2007-03-09 17:00,2007-01-29 08:00,2007-04-06 17:00,,2007-05-28 08:00,2007-07-06 17:00,,PT_Normal,,,,,pGoduhP5TZWi9OZleJ+Cxg,,,,N,0,0,,,2007-02-01 02:42,2007-02-01 02:43,hbe4678,hbe4678,2007-01-29 08:00,2007-03-09 17:00,240
2773,12458954,14517,6816088,13330,1,100,N,N,N,CP_Units,TT_Task,DT_FixedDUR2,RV_OK,TK_Complete,PK000IC36B,DCS (MIV) - Inquiry REQ/RFQ,,,,0,,0,,64,,,0,,2005-04-08 08:00,2005-04-20 17:00,2007-04-16 08:00,2007-04-16 08:00,,2007-01-27 00:00,2007-01-27 00:00,,,2005-04-08 08:00,2005-04-19 17:00,,,,,PT_Normal,,,,,w10343/wTr2l+7e8Z5S9hA,,,,N,,,,,2007-02-01 02:42,2007-02-04 01:05,hbe4678,hbe4678,,,0
2774,12458955,14517,6816088,13330,1,100,N,N,N,CP_Units,TT_Task,DT_FixedDUR2,RV_OK,TK_Complete,PK000IC36C,DCS (MIV) - Receive Bids,,,,0,0,0,,136,,0,0,,2005-04-21 08:00,2005-05-13 00:00,2007-04-16 08:00,2007-04-16 08:00,,2007-01-27 00:00,2007-01-27 00:00,,,2005-04-21 08:00,2005-05-13 17:00,,,,,PT_Normal,,,,,5WT6f34WQKaBKsdbFr87Kg,,,,N,0,0,,,2007-02-01 02:42,2007-02-04 01:05,hbe4678,hbe4678,,,0
2775,12458956,14517,6816088,13330,1,100,N,N,N,CP_Units,TT_Task,DT_FixedDUR2,RV_OK,TK_Complete,PK000PTA0A,Engineered Pipe Supports - Inquiry REQ/RFQ,,,,0,0,0,0,160,0,0,0,,2005-06-07 00:00,2005-07-05 00:00,2007-04-19 08:00,2007-04-19 08:00,,2007-01-27 00:00,2007-01-27 00:00,,,2006-04-12 08:00,2006-05-09 17:00,,,,,PT_Normal,,,,,3RPB2SWkR+SjbePlVI4sRg,5difpvdKREOUMfP530Fo2x,,,N,0,0,,,2007-02-01 02:42,2007-02-04 01:05,hbe4678,hbe4678,,,0
2776,12458957,14517,6816088,13330,1,100,N,N,N,CP_Units,TT_Task,DT_FixedDUR2,RV_OK,TK_Complete,PK000PTA0B,Engineered Pipe Supports - Receive Bids,,,,0,0,0,0,80,0,0,0,,2005-07-05 00:00,2005-07-26 00:00,2007-04-19 08:00,2007-04-19 08:00,,2007-01-27 00:00,2007-01-27 00:00,,,2006-05-10 08:00,2006-05-23 17:00,,,,,PT_Normal,,,,,Ks5w6WgoS42u8Dw11o+WhQ,/PfqcV+nEUqo2/lMYCTfxh,,,N,0,0,,,2007-02-01 02:42,2007-02-04 01:05,hbe4678,hbe4678,,,0
2777,12458958,14517,6816088,13330,1,100,N,N,N,CP_Units,TT_Task,DT_FixedDUR2,RV_OK,TK_Complete,PK000PTA0C,Engineered Pipe Supports - Eval Bids/Issue Recmd,,,,0,0,0,0,120,0,0,0,,2005-07-26 00:00,2005-09-08 00:00,2007-04-19 08:00,2007-04-19 08:00,,2007-01-27 00:00,2007-01-27 00:00,,,2006-05-24 08:00,2006-06-13 17:00,,,,,PT_Normal,,,,,I9z1DqZzRkidZTYOLZESQg,maiPKa05Y0+naJwPM4FWnR,,,N,0,0,,,2007-02-01 02:42,2007-02-04 01:05,hbe4678,hbe4678,,,0
2778,12458959,14517,6816088,13330,1,100,N,N,N,CP_Units,TT_Task,DT_FixedDUR2,RV_OK,TK_Complete,PK000PTA0D,Engineered Pipe Supports - Interim Award,,,,0,0,0,0,80,0,0,0,,2005-09-08 00:00,2005-09-14 00:00,2007-04-19 08:00,2007-04-19 08:00,,2007-01-27 00:00,2007-01-27 00:00,,,2006-06-14 08:00,2006-06-27 17:00,,,,,PT_Normal,,,,,qE8yAnYwQpW/vqI/WR8crw,8T2drREDNEq/TRsJfpbqDx,,,N,0,0,,,2007-02-01 02:42,2007-02-04 01:05,hbe4678,hbe4678,,,0
2779,12458960,14517,6816088,13330,1,100,N,N,N,CP_Units,TT_Task,DT_FixedDUR2,RV_OK,TK_Complete,PK000PTA0G,Engineered Pipe Supports - Fab / Exworks,,,,0,0,0,0,800,0,0,0,,2005-09-14 00:00,2006-12-29 00:00,2007-04-19 08:00,2007-04-19 08:00,,2007-01-27 00:00,2007-01-27 00:00,,,2006-06-28 08:00,2006-11-14 17:00,,,,,PT_Normal,,,,,ORfIBAF9Qym23CXbjv14vw,y8y4l105dk6LIpkBLaqXtB,,,N,0,0,,,2007-02-01 02:42,2007-02-04 01:05,hbe4678,hbe4678,,,0
2780,12458961,14517,6816088,13330,1,100,N,N,N,CP_Units,TT_Task,DT_FixedDUR2,RV_OK,TK_Complete,PK000I112C,Receive Quotes - Venturis,,,,0,0,0,0,120,0,0,0,,2005-05-27 00:00,2005-07-14 00:00,2006-12-25 08:00,2006-12-25 08:00,,2007-01-27 00:00,2007-01-27 00:00,,,2005-06-10 08:00,2005-06-30 17:00,,,,,PT_Normal,,,,,RpuC/IfzRyGqrilA7R1zfQ,UbnhMMqv80CCvaW5VuBSux,,,N,0,0,,,2007-02-01 02:42,2007-02-04 01:05,hbe4678,hbe4678,,,0
2781,12458962,14517,6816088,13330,1,100,N,N,N,CP_Units,TT_Task,DT_FixedDUR2,RV_OK,TK_Complete,PK000I112E,Eval Bids / Issue Recmd - Venturis,,,,0,0,0,0,24,0,0,0,,2005-08-29 00:00,2005-08-31 00:00,2006-12-25 08:00,2006-12-25 08:00,,2007-01-27 00:00,2007-01-27 00:00,,,2005-09-26 08:00,2005-09-28 17:00,,,,,PT_Normal,,,,,cEGDGqrbTsC0V14G6M5BBw,NcH4jqHKL0CvWyImykKoZR,,,N,0,0,,,2007-02-01 02:42,2007-02-04 01:05,hbe4678,hbe4678,,,0
2782,12458963,14517,6816088,13330,1,100,N,N,N,CP_Units,TT_Task,DT_FixedDUR2,RV_OK,TK_Complete,PK000I112G,Final Negotiation / Interim Award - Venturis,,,,0,0,0,0,40,0,0,0,,2005-08-31 00:00,2005-09-01 00:00,2006-12-25 08:00,2006-12-25 08:00,,2007-01-27 00:00,2007-01-27 00:00,,,2005-09-29 08:00,2005-10-05 17:00,,,,,PT_Normal,,,,,D4Y/ynhnTlG6G/FnSZ235Q,PfHcQO8LlEGvMqQgnHsmeB,,,N,0,0,,,2007-02-01 02:42,2007-02-04 01:05,hbe4678,hbe4678,,,0
2783,12458964,14517,6816088,13330,1,100,N,N,N,CP_Units,TT_Task,DT_FixedDUR2,RV_OK,TK_Complete,PK000I112K,Issue Formal Purchase Agreement - Venturis,,,,0,0,0,0,40,0,0,0,,2005-09-01 00:00,2005-12-15 00:00,2009-01-09 08:00,2009-01-09 08:00,,2007-01-27 00:00,2007-01-27 00:00,,,2005-10-10 08:01,2005-10-17 08:01,,,,,PT_Normal,,,,,omWFeb7aQjmcrQ2qkJ/WyA,SkgL68oI3Eql8cUZFCmFvx,,,N,0,0,,,2007-02-01 02:42,2007-02-04 01:05,hbe4678,hbe4678,,,0
2784,12458965,14517,6816088,13330,1,100,N,N,N,CP_Units,TT_Task,DT_FixedDUR2,RV_OK,TK_Active,PK000I1121,020 Venturis - Fabricate/Exworks,,4072,0,8,0,0,0,440,0,0,0,,2006-09-13 08:00,,2009-01-09 08:00,2009-01-09 17:00,,2007-01-29 08:00,2007-01-29 17:00,2007-01-29 08:00,2007-01-29 17:00,2006-09-13 08:00,2006-11-28 17:00,,2009-01-09 08:00,2009-01-09 17:00,,PT_Normal,,,,,sh0RmyknTpCX50vp6fLZXQ,upK8MONQfkGSKcmxPsAPKR,,,N,0,0,,,2007-02-01 02:42,2007-02-01 02:43,hbe4678,hbe4678,2007-01-29 08:00,2007-01-29 17:00,8
2785,12458966,14517,6816088,13330,1,0,N,N,N,CP_Units,TT_Task,DT_FixedDUR2,RV_OK,TK_NotStart,PK000I1131,Venturis - Transport & Deliver,,4072,0,200,0,0,0,400,0,0,0,,,,2009-01-12 08:00,2009-02-13 17:00,,2007-01-30 08:00,2007-03-05 17:00,2007-01-30 08:00,2007-03-05 17:00,2007-01-30 08:00,2007-04-09 17:00,,2009-01-12 08:00,2009-02-13 17:00,,PT_Normal,,,,,tnQ+Yn00TGOpsN7zXiK4iA,PAHuaU6R90WEX+AAslXW9h,,,N,0,0,,,2007-02-01 02:42,2007-02-01 02:43,hbe4678,hbe4678,2007-01-30 08:00,2007-03-05 17:00,200
2786,12458967,14517,6816088,13330,1,100,N,N,N,CP_Units,TT_Task,DT_FixedDUR2,RV_OK,TK_Complete,PK000MB34J,Final Negotiate/Interim Award - MB340,,,,0,0,0,0,24,0,0,0,,2005-09-13 00:00,2005-09-14 00:00,2007-10-27 08:01,2007-10-27 08:01,,2007-01-27 00:00,2007-01-27 00:00,,,2005-10-04 08:00,2005-10-06 17:00,,,,,PT_Normal,,,,,+28LXDnWSZ2xlSVwVr4zPw,,,,N,0,0,,,2007-02-01 02:42,2007-02-04 01:05,hbe4678,hbe4678,,,0
2787,12458968,14517,6816088,13330,1,100,N,N,N,CP_Units,TT_Task,DT_FixedDUR2,RV_OK,TK_Complete,PK000MB34K,MB340 - Fabricate/PO Promise 101-B Finning,,,,0,0,0,0,400,0,0,0,,2005-09-14 00:00,2006-05-29 00:00,2007-10-27 08:01,2007-10-27 08:01,,2007-01-27 00:00,2007-01-27 00:00,,,2006-05-09 08:00,2006-07-17 17:00,,,,,PT_Normal,,,,,Gt4yff+KQ+Css7caWWT9Fg,,,,N,0,0,,,2007-02-01 02:42,2007-02-04 01:05,hbe4678,hbe4678,,,0
2788,12458969,14517,6816088,13330,1,100,N,N,N,CP_Units,TT_Task,DT_FixedDUR2,RV_OK,TK_Complete,PK000MB34P,Issue Formal P.O. for  MB340,,,,0,0,0,0,24,0,0,0,,2005-09-14 00:00,2005-10-10 17:00,2007-10-27 08:01,2007-10-27 08:01,,2007-01-27 00:00,2007-01-27 00:00,,,2005-09-26 08:00,2005-09-28 17:00,,,,,PT_Normal,,,,,AqhLKAsFTomIGe9yC6fqkQ,,,,N,0,0,,,2007-02-01 02:42,2007-02-04 01:05,hbe4678,hbe4678,,,0
2789,12458970,14517,6816088,13330,1,100,N,N,N,CP_Units,TT_Task,DT_FixedDUR2,RV_OK,TK_Complete,PK000MB34Z,Shop Recv.- 101-B Finned Convection Tubes & Pipe,,,,0,0,0,0,80,0,0,0,,2006-05-30 00:00,2006-06-09 00:00,2007-10-27 08:01,2007-10-27 08:01,,2007-01-27 00:00,2007-01-27 00:00,,,2006-06-12 08:00,2006-06-23 17:00,,,,,PT_Normal,,,,,z4a7pKHSTJiahZtzHyER3g,,,,N,0,0,,,2007-02-01 02:42,2007-02-04 01:05,hbe4678,hbe4678,,,0
2790,12458971,14517,6816088,13330,1,100,N,N,N,CP_Units,TT_Task,DT_FixedDUR2,RV_OK,TK_Complete,PK000MB41G,Issue MB410 RFQ,,,,0,,0,,24,,,0,,2005-03-30 08:00,2005-03-31 17:00,2007-10-27 08:01,2007-10-27 08:01,,2007-01-27 00:00,2007-01-27 00:00,,,2005-03-30 08:00,2005-04-01 17:00,,,,,PT_Normal,,,,,iBD6kxpORAShtIZQbqf1Kw,,,,N,,,,,2007-02-01 02:42,2007-02-04 01:05,hbe4678,hbe4678,,,0
2791,12458972,14517,6816088,13330,1,100,N,N,N,CP_Units,TT_Task,DT_FixedDUR2,RV_OK,TK_Complete,PK000MB41H,Receive Quotes for MB410,,,,0,0,0,,160,,0,0,,2005-04-01 08:00,2005-05-20 17:00,2007-10-27 08:01,2007-10-27 08:01,,2007-01-27 00:00,2007-01-27 00:00,,,2005-04-01 08:00,2005-04-28 17:00,,,,,PT_Normal,,,,,io4jprSKSfqs84JhPQmZHQ,,,,N,0,0,,,2007-02-01 02:42,2007-02-04 01:05,hbe4678,hbe4678,,,0
2792,12458973,14517,6816088,13330,1,100,N,N,N,CP_Units,TT_Task,DT_FixedDUR2,RV_OK,TK_Complete,PK000MB41I,Eval Bids & Issue Recmd MB410,,,,0,0,0,0,40,0,0,0,,2005-06-01 08:00,2005-06-20 00:00,2007-10-27 08:01,2007-10-27 08:01,,2007-01-27 00:00,2007-01-27 00:00,,,2005-06-01 08:00,2005-06-07 17:00,,,,,PT_Normal,,,,,Q/O/4fvTR3aWbfC5MqfY8w,,,,N,0,0,,,2007-02-01 02:42,2007-02-04 01:05,hbe4678,hbe4678,,,0
2793,12458974,14517,6816088,13330,1,100,N,N,N,CP_Units,TT_Task,DT_FixedDUR2,RV_OK,TK_Complete,PK000MB41J,Final Negotiate/Interim Award - MB410,,,,0,0,0,0,80,0,0,0,,2005-09-09 00:00,2005-09-09 00:00,2007-10-27 08:01,2007-10-27 08:01,,2007-01-27 00:00,2007-01-27 00:00,,,2005-09-26 08:00,2005-10-07 17:00,,,,,PT_Normal,,,,,fCSK7fiuQXWUFSCvHWGKjg,,,,N,0,0,,,2007-02-01 02:42,2007-02-04 01:05,hbe4678,hbe4678,,,0
2794,12458975,14517,6816088,13330,1,100,N,N,N,CP_Units,TT_Task,DT_FixedDUR2,RV_OK,TK_Complete,PK000MB41K,MB410 - Fabricate/PO Promise 101-B Cast Tube Supports,,,,0,0,0,0,1200,0,0,0,,2005-09-12 00:00,2006-03-30 00:00,2007-10-27 08:01,2007-10-27 08:01,,2007-01-27 00:00,2007-01-27 00:00,,,2005-10-17 08:00,2006-05-16 17:00,,,,,PT_Normal,,,,,smQuG/6jQ4OoHehwye41oQ,,,,N,0,0,,,2007-02-01 02:42,2007-02-04 01:05,hbe4678,hbe4678,,,0
2795,12458976,14517,6816088,13330,1,100,N,N,N,CP_Units,TT_Task,DT_FixedDUR2,RV_OK,TK_Complete,PK000MB41P,Issue Formal P.O. for  MB410,,,,0,0,0,0,24,0,0,0,,2005-09-09 00:00,2005-10-10 17:00,2007-10-27 08:01,2007-10-27 08:01,,2007-01-27 00:00,2007-01-27 00:00,,,2005-10-10 08:00,2005-10-12 17:00,,,,,PT_Normal,,,,,n9ZzZcZERLC1CHEEOViG8g,,,,N,0,0,,,2007-02-01 02:42,2007-02-04 01:05,hbe4678,hbe4678,,,0
2796,12458977,14517,6816088,13330,1,100,N,N,N,CP_Units,TT_Task,DT_FixedDUR2,RV_OK,TK_Complete,PK000MB41Z,Shop Recv. - 101-B Cast Tube Supports,,,,0,0,0,0,80,0,0,0,,2006-06-12 08:00,2006-06-23 17:00,2007-10-27 08:01,2007-10-27 08:01,,2007-01-27 00:00,2007-01-27 00:00,,,2006-06-12 08:00,2006-06-23 17:00,,,,,PT_Normal,,,,,jXZIZB40SVu2jPO6Rzps1Q,,,,N,0,0,,,2007-02-01 02:42,2007-02-04 01:05,hbe4678,hbe4678,,,0
2797,12458978,14517,6816088,13330,1,100,N,N,N,CP_Units,TT_Task,DT_FixedDUR2,RV_OK,TK_Complete,PK000MB42G,Issue MB420 RFQ,,,,0,0,0,0,24,0,0,0,,2005-08-01 08:00,2005-08-05 00:00,2008-04-05 08:01,2008-04-05 08:01,,2007-01-27 00:00,2007-01-27 00:00,,,2005-08-01 08:00,2005-08-03 17:00,,,,,PT_Normal,,,,,Z0WqZBVtTkmDR/jxNNpqNg,,,,N,0,0,,,2007-02-01 02:42,2007-02-04 01:05,hbe4678,hbe4678,,,0
2798,12458979,14517,6816088,13330,1,100,N,N,N,CP_Units,TT_Task,DT_FixedDUR2,RV_OK,TK_Complete,PK000MB42H,Receive Quotes for MB420,,,,0,0,0,0,120,0,0,0,,2005-08-05 00:00,2005-10-21 00:00,2008-04-05 08:01,2008-04-05 08:01,,2007-01-27 00:00,2007-01-27 00:00,,,2005-08-04 08:00,2005-08-24 17:00,,,,,PT_Normal,,,,,SxHBmj51Reub1dfksJ2MtQ,,,,N,0,0,,,2007-02-01 02:42,2007-02-04 01:05,hbe4678,hbe4678,,,0
2799,12458980,14517,6816088,13330,1,100,N,N,N,CP_Units,TT_Task,DT_FixedDUR2,RV_OK,TK_Complete,PK000MB42I,Eval Bids & Issue Recmd MB420,,,,0,0,0,0,120,0,0,0,,2005-11-30 00:00,2005-12-01 00:00,2008-04-05 08:01,2008-04-05 08:01,,2007-01-27 00:00,2007-01-27 00:00,,,2005-11-14 08:00,2005-12-02 17:00,,,,,PT_Normal,,,,,WM0MNdqaTd6rIOANAx/9hg,,,,N,0,0,,,2007-02-01 02:42,2007-02-04 01:05,hbe4678,hbe4678,,,0
2800,12458981,14517,6816088,13330,1,100,N,N,N,CP_Units,TT_Task,DT_FixedDUR2,RV_OK,TK_Complete,PK000MB42J,Final Negotiate/Interim Award - MB420,,,,0,0,0,0,24,0,0,0,,2005-11-01 00:00,2005-12-08 00:00,2008-04-05 08:01,2008-04-05 08:01,,2007-01-27 00:00,2007-01-27 00:00,,,2005-11-14 08:00,2005-11-16 17:00,,,,,PT_Normal,,,,,jYAA5AQPTVK5dFF3ISDJHg,,,,N,0,0,,,2007-02-01 02:42,2007-02-04 01:05,hbe4678,hbe4678,,,0
2801,12458982,14517,6816088,13330,1,100,N,N,N,CP_Units,TT_Task,DT_FixedDUR2,RV_OK,TK_Complete,PK000MB42K,MB420 - Fabricate/PO Promise 101-B Cast Peep Sites,,,,0,0,0,0,480,0,0,0,,2005-12-08 00:00,2006-03-01 00:00,2008-04-05 08:01,2008-04-05 08:01,,2007-01-27 00:00,2007-01-27 00:00,,,2006-02-27 08:00,2006-05-19 17:00,,,,,PT_Normal,,,,,uhZMlcC8SU2TEGwMeR5ZNg,,,,N,0,0,,,2007-02-01 02:42,2007-02-04 01:05,hbe4678,hbe4678,,,0
2802,12458983,14517,6816088,13330,1,100,N,N,N,CP_Units,TT_Task,DT_FixedDUR2,RV_OK,TK_Complete,PK000MB33H,MB333 - Receive Quotes 101-B,,,,0,0,0,0,120,0,0,0,,2005-06-06 08:00,2005-07-08 17:00,2007-07-02 08:01,2007-07-02 08:01,,2007-01-27 00:00,2007-01-27 00:00,,,2005-06-06 08:00,2005-06-24 17:00,,,,,PT_Normal,,,,,o4Gx/EImQcGWomCKbDHQAA,,,,N,0,0,,,2007-02-01 02:42,2007-02-04 01:05,hbe4678,hbe4678,,,0
2803,12458984,14517,6816088,13330,1,100,N,N,N,CP_Units,TT_Task,DT_FixedDUR2,RV_OK,TK_Complete,PK000MB33I,MB333 - Eval Bids & Issue Recmd 101-B,,,,0,0,0,0,40,0,0,0,,2005-07-08 00:00,2005-08-25 00:00,2007-07-02 08:01,2007-07-02 08:01,,2007-01-27 00:00,2007-01-27 00:00,,,2005-07-18 08:00,2005-07-22 17:00,,,,,PT_Normal,,,,,v+pxjdS7Q/qplrOZsI3tHA,,,,N,0,0,,,2007-02-01 02:42,2007-02-04 01:05,hbe4678,hbe4678,,,0
2804,12458985,14517,6816088,13330,1,100,N,N,N,CP_Units,TT_Task,DT_FixedDUR2,RV_OK,TK_Complete,PK000MB33J,MB333 - Final Negotiate/Interim Award 101-B,,,,0,0,0,0,40,0,0,0,,2005-08-22 00:00,2005-08-26 00:00,2007-07-02 08:01,2007-07-02 08:01,,2007-01-27 00:00,2007-01-27 00:00,,,2005-09-30 08:00,2005-10-06 17:00,,,,,PT_Normal,,,,,/r4/6zO0QKeilTVlh89QFA,,,,N,0,0,,,2007-02-01 02:42,2007-02-04 01:05,hbe4678,hbe4678,,,0
2805,12458986,14517,6816088,13330,1,100,N,N,N,CP_Units,TT_Task,DT_FixedDUR2,RV_OK,TK_Complete,PK000MB33K,MB333 - Fab/PO Promise 101-B Riser Transition 101-B,,,,0,0,0,0,1040,0,0,0,,2005-08-29 00:00,2006-06-13 00:00,2007-12-03 08:01,2007-12-03 08:01,,2007-01-27 00:00,2007-01-27 00:00,,,2005-10-17 08:00,2006-04-18 17:00,,,,,PT_Normal,,,,,Ms4YRayZRaeXbfy50mp2TQ,,,,N,0,0,,,2007-02-01 02:42,2007-02-04 01:05,hbe4678,hbe4678,,,0
2806,12458987,14517,6816088,13330,1,100,N,N,N,CP_Units,TT_Task,DT_FixedDUR2,RV_OK,TK_Complete,PK000MB33O,MB333 - Transport/Customes Equip. 101-B,,,,0,0,0,0,240,0,0,0,,2006-11-13 08:00,2006-12-09 00:00,2007-12-03 08:01,2007-12-03 08:01,,2007-01-27 00:00,2007-01-27 00:00,,,2006-11-13 08:00,2006-12-22 17:00,,,,,PT_Normal,,,,,4haCm8SuTmur+Nef+3H3yg,,,,N,0,0,,,2007-02-01 02:42,2007-02-04 01:05,hbe4678,hbe4678,,,0
2807,12458988,14517,6816088,13330,1,100,N,N,N,CP_Units,TT_Task,DT_FixedDUR2,RV_OK,TK_Complete,PK000MB33P,MB333 - Issue Formal P.O. 101-B,,,,0,0,0,0,24,0,0,0,,2005-10-05 00:00,2005-10-07 00:00,2007-12-03 08:01,2007-12-03 08:01,,2007-01-27 00:00,2007-01-27 00:00,,,2005-10-07 08:00,2005-10-11 17:00,,,,,PT_Normal,,,,,uus2C8kJSRqfE3gjjRFnOA,,,,N,0,0,,,2007-02-01 02:42,2007-02-04 01:05,hbe4678,hbe4678,,,0
2808,12458989,14517,6816088,13330,1,100,N,N,N,CP_Units,TT_Task,DT_FixedDUR2,RV_OK,TK_Complete,PK000MB34G,Issue MB340 RFQ,,,,0,0,0,0,24,0,0,0,,2005-08-02 08:00,2005-08-03 00:00,2007-10-27 08:01,2007-10-27 08:01,,2007-01-27 00:00,2007-01-27 00:00,,,2005-08-02 08:00,2005-08-04 17:00,,,,,PT_Normal,,,,,qC85xlaFTKOp4I6ThqYmwg,,,,N,0,0,,,2007-02-01 02:42,2007-02-04 01:05,hbe4678,hbe4678,,,0
2809,12458990,14517,6816088,13330,1,100,N,N,N,CP_Units,TT_Task,DT_FixedDUR2,RV_OK,TK_Complete,PK000MB64G,Issue MB640 RFQ,,,,0,0,0,0,24,0,0,0,,2005-08-08 08:00,2005-08-11 00:00,2007-02-07 08:01,2007-02-07 08:01,,2007-01-27 00:00,2007-01-27 00:00,,,2005-08-08 08:00,2005-08-10 17:00,,,,,PT_Normal,,,,,HH4nYOPSSAiL1D3hX5U1nw,,,,N,0,0,,,2007-02-01 02:42,2007-02-04 01:05,hbe4678,hbe4678,,,0
2810,12458991,14517,6816088,13330,1,100,N,N,N,CP_Units,TT_Task,DT_FixedDUR2,RV_OK,TK_Complete,PK000MB64H,Receive Quotes for MB640,,,,0,0,0,0,120,0,0,0,,2005-08-11 08:00,2005-09-09 00:00,2007-02-07 08:01,2007-02-07 08:01,,2007-01-27 00:00,2007-01-27 00:00,,,2005-08-11 08:00,2005-08-31 17:00,,,,,PT_Normal,,,,,aRSWBl4eRWOa2FB67hQILA,,,,N,0,0,,,2007-02-01 02:42,2007-02-04 01:05,hbe4678,hbe4678,,,0
2811,12458992,14517,6816088,13330,1,100,N,N,N,CP_Units,TT_Task,DT_FixedDUR2,RV_OK,TK_Complete,PK000MB64I,Eval Bids & Issue Recmd MB640,,,,0,0,0,0,120,0,0,0,,2005-11-18 00:00,2005-12-12 00:00,2008-03-01 08:01,2008-03-01 08:01,,2007-01-27 00:00,2007-01-27 00:00,,,2005-11-14 08:00,2005-12-02 17:00,,,,,PT_Normal,,,,,N7TG+rbUSMWWSc62PKcQuw,,,,N,0,0,,,2007-02-01 02:42,2007-02-04 01:05,hbe4678,hbe4678,,,0
2812,12458993,14517,6816088,13330,1,100,N,N,N,CP_Units,TT_Task,DT_FixedDUR2,RV_OK,TK_Complete,PK000MB64J,Final Negotiate/Interim Award - MB640,,,,0,0,0,0,24,0,0,0,,2005-12-12 00:00,2006-02-06 00:00,2008-03-01 08:01,2008-03-01 08:01,,2007-01-27 00:00,2007-01-27 00:00,,,2005-12-19 08:00,2005-12-21 17:00,,,,,PT_Normal,,,,,rlAbC8SFSVGTNNi0BROG+g,,,,N,0,0,,,2007-02-01 02:42,2007-02-04 01:05,hbe4678,hbe4678,,,0
2813,12458994,14517,6816088,13330,1,100,N,N,N,CP_Units,TT_Task,DT_FixedDUR2,RV_OK,TK_Complete,PK000MB64K,MB640 - Fabricate/PO Promise 101-B Springs & Hangers,,,,0,0,0,0,1040,0,0,0,,2006-02-06 00:00,2006-08-07 00:00,2008-03-01 08:01,2008-03-01 08:01,,2007-01-27 00:00,2007-01-27 00:00,,,2006-01-30 08:00,2006-07-28 17:00,,,,,PT_Normal,,,,,ClZQGYyKRwSxBzYuiDx1Hg,,,,N,0,0,,,2007-02-01 02:42,2007-02-04 01:05,hbe4678,hbe4678,,,0
2814,12458995,14517,6816088,13330,1,100,N,N,N,CP_Units,TT_Task,DT_FixedDUR2,RV_OK,TK_Complete,PK000MB42O,MB420 - Transport to Vendor 101-B Cast Peep Sites,,,,0,0,0,0,240,0,0,0,,2006-11-15 08:00,2006-11-30 00:00,2008-04-05 08:01,2008-04-05 08:01,,2007-01-27 00:00,2007-01-27 00:00,,,2006-11-15 08:00,2006-12-26 17:00,,,,,PT_Normal,,,,,WVFuklTVSdu2w+8Z/xckFA,,,,N,0,0,,,2007-02-01 02:42,2007-02-04 01:05,hbe4678,hbe4678,,,0
2815,12458996,14517,6816088,13330,1,100,N,N,N,CP_Units,TT_Task,DT_FixedDUR2,RV_OK,TK_Complete,PK000MB42P,Issue Formal P.O. for  MB420,,,,0,0,0,0,80,0,0,0,,2005-12-09 00:00,2005-12-22 00:00,2008-04-05 08:01,2008-04-05 08:01,,2007-01-27 00:00,2007-01-27 00:00,,,2006-01-03 08:00,2006-01-16 17:00,,,,,PT_Normal,,,,,i6CwS6CkSS6353TFS4Ta/w,,,,N,0,0,,,2007-02-01 02:42,2007-02-04 01:05,hbe4678,hbe4678,,,0
2816,12458997,14517,6816088,13330,1,100,N,N,N,CP_Units,TT_Task,DT_FixedDUR2,RV_OK,TK_Complete,PK000MB51G,Issue MB511 RFQ,,,,0,,0,,24,,,0,,2005-04-07 08:00,2005-04-08 17:00,2007-11-09 08:00,2007-11-09 08:00,,2007-01-27 00:00,2007-01-27 00:00,,,2005-04-07 08:00,2005-04-11 17:00,,,,,PT_Normal,,,,,XCIm7Q0LSNSiS0cPOMQmzA,,,,N,,,,,2007-02-01 02:42,2007-02-04 01:05,hbe4678,hbe4678,,,0
2817,12458998,14517,6816088,13330,1,100,N,N,N,CP_Units,TT_Task,DT_FixedDUR2,RV_OK,TK_Complete,PK000MB51H,Receive Quotes for MB511,,,,0,0,0,,128,,0,0,,2005-04-11 08:00,2005-05-02 17:00,2007-11-09 08:00,2007-11-09 08:00,,2007-01-27 00:00,2007-01-27 00:00,,,2005-04-11 08:00,2005-05-02 17:00,,,,,PT_Normal,,,,,wzzut7bPSoapROZzPge7GQ,,,,N,0,0,,,2007-02-01 02:42,2007-02-04 01:05,hbe4678,hbe4678,,,0
2818,12458999,14517,6816088,13330,1,100,N,N,N,CP_Units,TT_Task,DT_FixedDUR2,RV_OK,TK_Complete,PK000MB51I,Eval Bids & Issue Recmd MB511,,,,0,0,0,0,40,0,0,0,,2005-05-27 08:00,2005-06-14 00:00,2007-11-09 08:00,2007-11-09 08:00,,2007-01-27 00:00,2007-01-27 00:00,,,2005-05-27 08:00,2005-06-03 17:00,,,,,PT_Normal,,,,,/fOsFHXSQyC6hslNGxK5XQ,,,,N,0,0,,,2007-02-01 02:42,2007-02-04 01:05,hbe4678,hbe4678,,,0
2819,12459000,14517,6816088,13330,1,100,N,N,N,CP_Units,TT_Task,DT_FixedDUR2,RV_OK,TK_Complete,PK000MB51J,Final Negotiate/Interim Award - MB511,,,,0,0,0,0,120,0,0,0,,2005-09-26 08:00,2005-10-03 00:00,2007-11-09 08:00,2007-11-09 08:00,,2007-01-27 00:00,2007-01-27 00:00,,,2005-09-26 08:00,2005-10-14 17:00,,,,,PT_Normal,,,,,idlO22c6SLqtfTgvW1UwxQ,,,,N,0,0,,,2007-02-01 02:42,2007-02-04 01:05,hbe4678,hbe4678,,,0
2820,12459001,14517,6816088,13330,1,0,N,N,N,CP_Units,TT_Task,DT_FixedDUR2,RV_OK,TK_Active,PK000MB51K,MB511 - Fabricate/PO Promise 101-B Insulation,,1632,0,8,0,0,0,960,0,0,0,,2005-10-04 00:00,,2007-11-09 08:00,2007-11-09 17:00,,2007-01-29 08:00,2007-01-29 17:00,2007-01-29 08:00,2007-01-29 17:00,2005-10-17 08:00,2006-04-04 17:00,,2007-11-09 08:00,2007-11-09 17:00,,PT_Normal,,,,,WPeL5dSLRqeQ2nuK0ffmhA,,,,N,0,0,,,2007-02-01 02:42,2007-02-01 02:43,hbe4678,hbe4678,2007-01-29 08:00,2007-01-29 17:00,8
2821,12459002,14517,6816088,13330,1,0,N,N,N,CP_Units,TT_Task,DT_FixedDUR2,RV_OK,TK_NotStart,PK000MB51O,MB511 - Transport/Customes 101-B Insulation,,1632,0,240,0,0,0,240,0,0,0,,,,2007-12-03 08:00,2008-01-11 17:00,,2007-02-20 08:00,2007-04-02 17:00,2007-02-20 08:00,2007-04-02 17:00,2007-02-20 08:00,2007-04-02 17:00,,2007-12-03 08:00,2008-01-11 17:00,,PT_Normal,,,,,hV57TuY/Ti6ON/+GUAlOVQ,,,,N,0,0,,,2007-02-01 02:42,2007-02-01 02:43,hbe4678,hbe4678,2007-02-20 08:00,2007-04-02 17:00,240
2822,12459003,14517,6816088,13330,1,100,N,N,N,CP_Units,TT_Task,DT_FixedDUR2,RV_OK,TK_Complete,PK000MB51P,Issue Formal P.O. for  MB511,,,,0,0,0,0,24,0,0,0,,2005-10-03 00:00,2006-01-06 00:00,2007-11-09 17:00,2007-11-09 17:00,,2007-01-27 00:00,2007-01-27 00:00,,,2005-10-17 08:00,2005-10-19 17:00,,,,,PT_Normal,,,,,tzY738rVRcSPwNMhHXb+iQ,,,,N,0,0,,,2007-02-01 02:42,2007-02-04 01:05,hbe4678,hbe4678,,,0
2823,12459004,14517,6816088,13330,1,100,N,N,N,CP_Units,TT_Task,DT_FixedDUR2,RV_OK,TK_Complete,PK000MB61G,Issue MB610 RFQ,,,,0,,0,,24,,,0,,2005-03-28 08:00,2005-03-28 17:00,2007-09-19 08:01,2007-09-19 08:01,,2007-01-27 00:00,2007-01-27 00:00,,,2005-03-28 08:00,2005-03-30 17:00,,,,,PT_Normal,,,,,LJ++UIB8Tp2ljtwZkVbZAQ,,,,N,,,,,2007-02-01 02:42,2007-02-04 01:05,hbe4678,hbe4678,,,0
2824,12459005,14517,6816088,13330,1,100,N,N,N,CP_Units,TT_Task,DT_FixedDUR2,RV_OK,TK_Complete,PK000MB61H,Receive Quotes for MB610,,,,0,,0,,80,,,0,,2005-03-29 08:00,2005-04-12 17:00,2007-09-19 08:01,2007-09-19 08:01,,2007-01-27 00:00,2007-01-27 00:00,,,2005-03-29 08:00,2005-04-11 17:00,,,,,PT_Normal,,,,,h69r6R4BRgKl7sRDKAt9Iw,,,,N,,,,,2007-02-01 02:42,2007-02-04 01:05,hbe4678,hbe4678,,,0
2825,12459006,14517,6816088,13330,1,100,N,N,N,CP_Units,TT_Task,DT_FixedDUR2,RV_OK,TK_Complete,PK000MB61I,Eval Bids & Issue Recmd MB610,,,,0,0,0,,40,,0,0,,2005-04-20 08:00,2005-05-26 00:00,2007-09-19 08:01,2007-09-19 08:01,,2007-01-27 00:00,2007-01-27 00:00,,,2005-04-20 08:00,2005-04-26 17:00,,,,,PT_Normal,,,,,hvZctl/tRoKzI9h7K1J8pg,,,,N,0,0,,,2007-02-01 02:42,2007-02-04 01:05,hbe4678,hbe4678,,,0
2826,12459007,14517,6816088,13330,1,100,N,N,N,CP_Units,TT_Task,DT_FixedDUR2,RV_OK,TK_Complete,PK000MB61J,Final Negotiate/Interim Award - MB610,,,,0,0,0,0,80,0,0,0,,2005-09-05 00:00,2005-09-09 00:00,2007-09-19 08:01,2007-09-19 08:01,,2007-01-27 00:00,2007-01-27 00:00,,,2005-09-26 08:00,2005-10-07 17:00,,,,,PT_Normal,,,,,9G45ztbZTCaJz5ExCecIMw,,,,N,0,0,,,2007-02-01 02:42,2007-02-04 01:05,hbe4678,hbe4678,,,0
2827,12459008,14517,6816088,13330,1,100,N,N,N,CP_Units,TT_Task,DT_FixedDUR2,RV_OK,TK_Complete,PK000MB61K,MB610 - Fabricate/PO Promise 101-B Burners,,,,0,0,0,0,1040,0,0,0,,2005-09-12 00:00,2006-05-01 17:00,2007-09-19 08:01,2007-09-19 08:01,,2007-01-27 00:00,2007-01-27 00:00,,,2005-10-17 08:00,2006-04-18 17:00,,,,,PT_Normal,,,,,LiA++RBiQAKbt7HRSNE9gw,,,,N,0,0,,,2007-02-01 02:42,2007-02-04 01:05,hbe4678,hbe4678,,,0
2828,12459009,14517,6816088,13330,1,100,N,N,N,CP_Units,TT_Task,DT_FixedDUR2,RV_OK,TK_Complete,PK000MB61O,Transport & Deliver 101-B Burners,,,,0,0,0,0,400,0,0,0,,2006-08-16 00:00,2006-09-14 00:00,2007-09-19 08:01,2007-09-19 08:01,,2007-01-27 00:00,2007-01-27 00:00,,,2006-09-04 08:00,2006-11-10 17:00,,,,,PT_Normal,,,,,EcdZg9JSQoGThoeSwK6H5A,,,,N,0,0,,,2007-02-01 02:42,2007-02-04 01:05,hbe4678,hbe4678,,,0
2829,12459010,14517,6816088,13330,1,100,N,N,N,CP_Units,TT_Task,DT_FixedDUR2,RV_OK,TK_Complete,PK000MB61P,Issue Formal P.O. for  MB610,,,,0,0,0,0,24,0,0,0,,2005-09-09 00:00,2005-10-31 00:00,2007-09-19 08:01,2007-09-19 08:01,,2007-01-27 00:00,2007-01-27 00:00,,,2005-10-10 08:00,2005-10-12 17:00,,,,,PT_Normal,,,,,Gz+zK/MVT+GhcNvBmIWrfg,,,,N,0,0,,,2007-02-01 02:42,2007-02-04 01:05,hbe4678,hbe4678,,,0
2830,12459011,14517,6816088,13330,1,100,N,N,N,CP_Units,TT_Task,DT_FixedDUR2,RV_OK,TK_Complete,PK000MB62G,Issue MB621 RFQ,,,,0,,0,,24,,,0,,2005-03-28 08:00,2005-03-31 17:00,2007-03-07 08:01,2007-03-07 08:01,,2007-01-27 00:00,2007-01-27 00:00,,,2005-03-28 08:00,2005-03-30 17:00,,,,,PT_Normal,,,,,uHo7vWrwTJWfkJt0LLHpDQ,,,,N,,,,,2007-02-01 02:42,2007-02-04 01:05,hbe4678,hbe4678,,,0
2831,12459012,14517,6816088,13330,1,100,N,N,N,CP_Units,TT_Task,DT_FixedDUR2,RV_OK,TK_Complete,PK000MB63G,Issue MB630 RFQ,,,,0,,0,,24,,,0,,2005-03-31 08:00,2005-04-04 17:00,2007-06-07 08:01,2007-06-07 08:01,,2007-01-27 00:00,2007-01-27 00:00,,,2005-03-31 08:00,2005-04-04 17:00,,,,,PT_Normal,,,,,wzRUN+/lRbGUErkskELSrA,,,,N,,,,,2007-02-01 02:42,2007-02-04 01:05,hbe4678,hbe4678,,,0
2832,12459013,14517,6816088,13330,1,100,N,N,N,CP_Units,TT_Task,DT_FixedDUR2,RV_OK,TK_Complete,PK000MB34I,Eval Bids & Issue Recmd MB340,,,,0,0,0,0,120,0,0,0,,2005-08-24 00:00,2005-09-13 17:00,2007-10-27 08:01,2007-10-27 08:01,,2007-01-27 00:00,2007-01-27 00:00,,,2005-09-13 08:00,2005-10-03 17:00,,,,,PT_Normal,,,,,JtEDlpSCT6ygvXE02YAH5Q,,,,N,0,0,,,2007-02-01 02:42,2007-02-04 01:05,hbe4678,hbe4678,,,0
2833,12459014,14517,6816088,13330,1,100,N,N,N,CP_Units,TT_Task,DT_FixedDUR2,RV_OK,TK_Complete,PK000MB65P,Issue Formal P.O. for  MB622,,,,0,0,0,0,24,0,0,0,,2006-02-06 08:00,2006-02-20 00:00,2007-12-17 08:01,2007-12-17 08:01,,2007-01-27 00:00,2007-01-27 00:00,,,2006-02-06 08:00,2006-02-08 17:00,,,,,PT_Normal,,,,,mFU8RRd9StyE3DuUt6VT2w,,,,N,0,0,,,2007-02-01 02:42,2007-02-04 01:05,hbe4678,hbe4678,,,0
2834,12459015,14517,6816088,13330,1,100,N,N,N,CP_Units,TT_Task,DT_FixedDUR2,RV_OK,TK_Complete,PK000MB66G,Issue MB660 RFQ,,,,0,0,0,0,24,0,0,0,,2005-07-26 00:00,2005-07-26 00:00,2008-03-29 08:01,2008-03-29 08:01,,2007-01-27 00:00,2007-01-27 00:00,,,2005-07-13 08:00,2005-07-15 17:00,,,,,PT_Normal,,,,,QyF5uEgDSviUYKxis6tMIQ,,,,N,0,0,,,2007-02-01 02:42,2007-02-04 01:05,hbe4678,hbe4678,,,0
2835,12459016,14517,6816088,13330,1,100,N,N,N,CP_Units,TT_Task,DT_FixedDUR2,RV_OK,TK_Complete,PK000MB66H,Receive Quotes for MB660,,,,0,0,0,0,120,0,0,0,,2005-07-26 00:00,2005-08-26 17:00,2008-03-29 08:01,2008-03-29 08:01,,2007-01-27 00:00,2007-01-27 00:00,,,2005-08-02 08:00,2005-08-22 17:00,,,,,PT_Normal,,,,,AQo5DIshRWuu3X6H8efjTQ,,,,N,0,0,,,2007-02-01 02:42,2007-02-04 01:05,hbe4678,hbe4678,,,0
2836,12459017,14517,6816088,13330,1,100,N,N,N,CP_Units,TT_Task,DT_FixedDUR2,RV_OK,TK_Complete,PK000MB66I,Eval Bids & Issue Recmd MB660,,,,0,0,0,0,120,0,0,0,,2005-09-12 00:00,2006-02-20 00:00,2008-03-29 08:01,2008-03-29 08:01,,2007-01-27 00:00,2007-01-27 00:00,,,2005-09-26 08:00,2005-10-14 17:00,,,,,PT_Normal,,,,,d2ACWvkoTASGvX69pekIMQ,,,,N,0,0,,,2007-02-01 02:42,2007-02-04 01:05,hbe4678,hbe4678,,,0
2837,12459018,14517,6816088,13330,1,100,N,N,N,CP_Units,TT_Task,DT_FixedDUR2,RV_OK,TK_Complete,PK000MB66J,Final Negotiate/Interim Award - MB660,,,,0,0,0,0,24,0,0,0,,2006-02-20 00:00,2006-02-24 00:00,2008-03-29 08:01,2008-03-29 08:01,,2007-01-27 00:00,2007-01-27 00:00,,,2006-03-13 08:00,2006-03-15 17:00,,,,,PT_Normal,,,,,N54kYhceTV6b+EYnmIX3Eg,,,,N,0,0,,,2007-02-01 02:42,2007-02-04 01:05,hbe4678,hbe4678,,,0
2838,12459019,14517,6816088,13330,1,100,N,N,N,CP_Units,TT_Task,DT_FixedDUR2,RV_OK,TK_Complete,PK000MB66K,MB660 - Fabricate/PO Promise 101-B Dampers & Air Doors,,,,0,0,0,0,1040,0,0,0,,2006-02-24 00:00,2006-09-28 17:00,2008-03-29 08:01,2008-03-29 08:01,,2007-01-27 00:00,2007-01-27 00:00,,,2006-03-16 08:00,2006-09-13 17:00,,,,,PT_Normal,,,,,rEzgPXF6QRO9+GvD2YYGAg,,,,N,0,0,,,2007-02-01 02:42,2007-02-04 01:05,hbe4678,hbe4678,,,0
2839,12459020,14517,6816088,13330,1,100,N,N,N,CP_Units,TT_Task,DT_FixedDUR2,RV_OK,TK_Complete,PK000MB66O,MB660 - Transport/Customes 101-B Dampers & Air Doors,,,,0,0,0,0,240,0,0,0,,2006-09-29 08:00,2006-12-08 17:00,2008-03-29 08:01,2008-03-29 08:01,,2007-01-27 00:00,2007-01-27 00:00,,,2006-09-29 08:00,2006-11-09 17:00,,,,,PT_Normal,,,,,DrvHfAvRQUaipke0Jbaj1w,,,,N,0,0,,,2007-02-01 02:42,2007-02-04 01:05,hbe4678,hbe4678,,,0
2840,12459021,14517,6816088,13330,1,100,N,N,N,CP_Units,TT_Task,DT_FixedDUR2,RV_OK,TK_Complete,PK000MB66P,Issue Formal P.O. for  MB660,,,,0,0,0,0,24,0,0,0,,2006-02-24 00:00,2006-02-24 00:00,2008-03-29 08:01,2008-03-29 08:01,,2007-01-27 00:00,2007-01-27 00:00,,,2006-03-16 08:00,2006-03-20 17:00,,,,,PT_Normal,,,,,fji4EYPJT5+t/289GOsXdg,,,,N,0,0,,,2007-02-01 02:42,2007-02-04 01:05,hbe4678,hbe4678,,,0
2841,12459022,14517,6816088,13330,1,100,N,N,N,CP_Units,TT_Task,DT_FixedDUR2,RV_OK,TK_Complete,PK000MB68G,Issue MB692 RFQ,,,,0,0,0,0,24,0,0,0,,2005-07-25 00:00,2005-07-27 00:00,2008-04-12 08:01,2008-04-12 08:01,,2007-01-27 00:00,2007-01-27 00:00,,,2005-08-05 08:00,2005-08-09 17:00,,,,,PT_Normal,,,,,GEeM9c+QQE2Z0ETV6hgyhg,,,,N,0,0,,,2007-02-01 02:42,2007-02-04 01:05,hbe4678,hbe4678,,,0
2842,12459023,14517,6816088,13330,1,100,N,N,N,CP_Units,TT_Task,DT_FixedDUR2,RV_OK,TK_Complete,PK000MB68H,Receive Quotes for MB692,,,,0,0,0,0,120,0,0,0,,2005-07-28 00:00,2005-08-26 00:00,2008-04-12 08:01,2008-04-12 08:01,,2007-01-27 00:00,2007-01-27 00:00,,,2005-08-10 08:00,2005-08-30 17:00,,,,,PT_Normal,,,,,G/NMdW1ETOmaOKRfBOz4YQ,,,,N,0,0,,,2007-02-01 02:42,2007-02-04 01:05,hbe4678,hbe4678,,,0
2843,12459024,14517,6816088,13330,1,100,N,N,N,CP_Units,TT_Task,DT_FixedDUR2,RV_OK,TK_Complete,PK000MB68I,Eval Bids & Issue Recmd MB692,,,,0,0,0,0,120,0,0,0,,2005-09-30 00:00,2006-03-30 00:00,2008-04-12 08:01,2008-04-12 08:01,,2007-01-27 00:00,2007-01-27 00:00,,,2005-10-11 08:00,2005-10-31 17:00,,,,,PT_Normal,,,,,3ZgrnNSKQ2q5XCgkF1RDgQ,,,,N,0,0,,,2007-02-01 02:42,2007-02-04 01:05,hbe4678,hbe4678,,,0
2844,12459025,14517,6816088,13330,1,100,N,N,N,CP_Units,TT_Task,DT_FixedDUR2,RV_OK,TK_Complete,PK000MB62H,Receive Quotes for MB621,,,,0,0,0,,120,,0,0,,2005-04-01 08:00,2005-04-28 17:00,2007-03-07 08:01,2007-03-07 08:01,,2007-01-27 00:00,2007-01-27 00:00,,,2005-04-01 08:00,2005-04-21 17:00,,,,,PT_Normal,,,,,vulCTccxQJGHlTx1HEhKgA,,,,N,0,0,,,2007-02-01 02:42,2007-02-04 01:05,hbe4678,hbe4678,,,0
2845,12459026,14517,6816088,13330,1,100,N,N,N,CP_Units,TT_Task,DT_FixedDUR2,RV_OK,TK_Complete,PK000MB62I,Eval Bids & Issue Recmd MB621,,,,0,0,0,0,160,0,0,0,,2005-05-27 08:00,2005-05-30 00:00,2007-03-07 08:01,2007-03-07 08:01,,2007-01-27 00:00,2007-01-27 00:00,,,2005-05-27 08:00,2005-06-24 17:00,,,,,PT_Normal,,,,,1IGNymyxSFmWOFXE9nj1Yg,,,,N,0,0,,,2007-02-01 02:42,2007-02-04 01:05,hbe4678,hbe4678,,,0
2846,12459027,14517,6816088,13330,1,100,N,N,N,CP_Units,TT_Task,DT_FixedDUR2,RV_OK,TK_Complete,PK000MB62J,Final Negotiate/Interim Award - MB621,,,,0,0,0,0,80,0,0,0,,2005-09-05 00:00,2005-09-09 00:00,2007-03-07 08:01,2007-03-07 08:01,,2007-01-27 00:00,2007-01-27 00:00,,,2005-09-26 08:00,2005-10-07 17:00,,,,,PT_Normal,,,,,G07ExI9mSU+xpCQGpf0EQQ,,,,N,0,0,,,2007-02-01 02:42,2007-02-04 01:05,hbe4678,hbe4678,,,0
2847,12459028,14517,6816088,13330,1,100,N,N,N,CP_Units,TT_Task,DT_FixedDUR2,RV_OK,TK_Complete,PK000MB62K,MB621 - Fabricate/PO Promise 101-B ID & FD Fans,,,,0,0,0,0,1600,0,0,0,,2005-09-12 00:00,2006-12-15 00:00,2007-11-26 08:00,2007-11-26 08:00,,2007-01-27 00:00,2007-01-27 00:00,,,2005-10-17 08:00,2006-07-25 17:00,,,,,PT_Normal,,,,,03MNG3FyQSqycGlgnOFMLg,,,,N,0,0,,,2007-02-01 02:42,2007-02-04 01:05,hbe4678,hbe4678,,,0
2848,12459029,14517,6816088,4050,1,0,N,N,N,CP_Units,TT_Task,DT_FixedDUR2,RV_OK,TK_NotStart,PK000MB62O,MB621 - Transport/Customes of 101-B ID & FD Fans,,2408.01666666667,0.0166666666666667,168,0,0,0,240,0,0,0,,,,2008-01-12 08:01,2008-02-02 08:01,,2007-03-17 08:00,2007-04-06 17:00,2007-03-17 08:00,2007-04-06 17:00,2007-03-17 08:00,2007-04-15 17:00,,2008-01-12 08:01,2008-02-02 08:01,,PT_Normal,,,,,GHBdtk03QX2dlZ5siDxERA,,,,N,0,0,,,2007-02-01 02:42,2007-02-04 01:00,hbe4678,hbe4678,2007-03-17 08:00,2007-04-06 17:00,168
2849,12459030,14517,6816088,13330,1,100,N,N,N,CP_Units,TT_Task,DT_FixedDUR2,RV_OK,TK_Complete,PK000MB62P,Issue Formal P.O. for  MB621,,,,0,0,0,0,24,0,0,0,,2005-09-09 00:00,2006-01-09 00:00,2007-11-26 08:00,2007-11-26 08:00,,2007-01-27 00:00,2007-01-27 00:00,,,2005-10-10 08:00,2005-10-12 17:00,,,,,PT_Normal,,,,,5KaBlWUUR7mHJM3iihltCQ,,,,N,0,0,,,2007-02-01 02:42,2007-02-04 01:05,hbe4678,hbe4678,,,0
2850,12459031,14517,6816088,13330,1,100,N,N,N,CP_Units,TT_Task,DT_FixedDUR2,RV_OK,TK_Complete,PK000MB63H,Receive Quotes for MB630,,,,0,0,0,,144,,0,0,,2005-04-05 08:00,2005-04-28 17:00,2007-06-07 08:01,2007-06-07 08:01,,2007-01-27 00:00,2007-01-27 00:00,,,2005-04-05 08:00,2005-04-28 17:00,,,,,PT_Normal,,,,,5MEpyiSPSsSx5j/V20igzA,,,,N,0,0,,,2007-02-01 02:42,2007-02-04 01:05,hbe4678,hbe4678,,,0
2851,12459032,14517,6816088,13330,1,100,N,N,N,CP_Units,TT_Task,DT_FixedDUR2,RV_OK,TK_Complete,PK000MB63I,Eval Bids & Issue Recmd MB630,,,,0,0,0,0,40,0,0,0,,2005-06-13 00:00,2005-08-11 00:00,2007-06-07 08:01,2007-06-07 08:01,,2007-01-27 00:00,2007-01-27 00:00,,,2005-06-03 08:00,2005-06-09 17:00,,,,,PT_Normal,,,,,59CX5bQIQcqRT80FMak/hQ,,,,N,0,0,,,2007-02-01 02:42,2007-02-04 01:05,hbe4678,hbe4678,,,0
2852,12459033,14517,6816088,13330,1,100,N,N,N,CP_Units,TT_Task,DT_FixedDUR2,RV_OK,TK_Complete,PK000MB63J,Final Negotiate/Interim Award - MB630,,,,0,0,0,0,40,0,0,0,,2005-09-05 00:00,2005-09-09 00:00,2007-06-07 08:01,2007-06-07 08:01,,2007-01-27 00:00,2007-01-27 00:00,,,2005-09-26 08:00,2005-09-30 17:00,,,,,PT_Normal,,,,,1jWyhoWJQ8KD4NBzDRJDkQ,,,,N,0,0,,,2007-02-01 02:42,2007-02-04 01:05,hbe4678,hbe4678,,,0
2853,12459034,14517,6816088,13330,1,100,N,N,N,CP_Units,TT_Task,DT_FixedDUR2,RV_OK,TK_Complete,PK000MB63K,MB630 - Fabricate/PO Promise 101-B  Air Preheater,,,,0,0,0,0,1600,0,0,0,,2005-09-12 00:00,2006-05-15 00:00,2008-01-19 08:01,2008-01-19 08:01,,2007-01-27 00:00,2007-01-27 00:00,,,2005-10-17 08:00,2006-07-25 17:00,,,,,PT_Normal,,,,,nxq+PQ3CS4Cskcyvo5DQlw,,,,N,0,0,,,2007-02-01 02:42,2007-02-04 01:05,hbe4678,hbe4678,,,0
2854,12459035,14517,6816088,13330,1,100,N,N,N,CP_Units,TT_Task,DT_FixedDUR2,RV_OK,TK_Complete,PK000MB63O,MB630 - Transport/Customes 101-B Air Preheater,,,,0,0,0,0,200,0,0,0,,2006-08-16 00:00,2006-09-14 00:00,2008-01-19 08:01,2008-01-19 08:01,,2007-01-27 00:00,2007-01-27 00:00,,,2006-09-04 08:00,2006-10-06 17:00,,,,,PT_Normal,,,,,ae5PVPCOSauTI8ylKbNDVQ,,,,N,0,0,,,2007-02-01 02:42,2007-02-04 01:05,hbe4678,hbe4678,,,0
2855,12459036,14517,6816088,13330,1,100,N,N,N,CP_Units,TT_Task,DT_FixedDUR2,RV_OK,TK_Complete,PK000MB63P,Issue Formal P.O. for  MB630,,,,0,0,0,0,24,0,0,0,,2005-09-09 00:00,2005-10-10 00:00,2008-01-19 08:01,2008-01-19 08:01,,2007-01-27 00:00,2007-01-27 00:00,,,2005-10-03 08:00,2005-10-05 17:00,,,,,PT_Normal,,,,,6rmMK+vYTqmG7nV+iFyi3w,,,,N,0,0,,,2007-02-01 02:42,2007-02-04 01:05,hbe4678,hbe4678,,,0
2856,12459037,14517,6816088,13330,1,100,N,N,N,CP_Units,TT_Task,DT_FixedDUR2,RV_OK,TK_Complete,PK000MB68K,MB692 - Fabricate/PO Promise 101-B Cat Vacuum Equip.,,,,0,0,0,0,1040,0,0,0,,2006-04-03 00:00,2006-06-01 00:00,2008-04-12 08:01,2008-04-12 08:01,,2007-01-27 00:00,2007-01-27 00:00,,,2006-03-27 08:00,2006-09-22 17:00,,,,,PT_Normal,,,,,FYKEwyOjR46K977ML47Vpg,,,,N,0,0,,,2007-02-01 02:42,2007-02-04 01:05,hbe4678,hbe4678,,,0
2857,12459038,14517,6816088,13330,1,100,N,N,N,CP_Units,TT_Task,DT_FixedDUR2,RV_OK,TK_Complete,PK000MB68O,MB692 - Transport/Customes 101-B Cat Vacuum Equip.,,,,0,0,0,0,240,0,0,0,,2006-08-16 00:00,2006-09-14 00:00,2008-04-12 08:01,2008-04-12 08:01,,2007-01-27 00:00,2007-01-27 00:00,,,2006-09-04 08:00,2006-10-13 17:00,,,,,PT_Normal,,,,,AAbw28f/QrenIMmWUxwkbw,,,,N,0,0,,,2007-02-01 02:42,2007-02-04 01:05,hbe4678,hbe4678,,,0
2858,12459039,14517,6816088,13330,1,100,N,N,N,CP_Units,TT_Task,DT_FixedDUR2,RV_OK,TK_Complete,PK000MB68P,Issue Formal P.O. for  MB692,,,,0,0,0,0,80,0,0,0,,2006-04-03 00:00,2006-04-06 00:00,2008-04-12 08:01,2008-04-12 08:01,,2007-01-27 00:00,2007-01-27 00:00,,,2006-04-26 08:00,2006-05-09 17:00,,,,,PT_Normal,,,,,JZABgv8SQbqmxptDReXSWQ,,,,N,0,0,,,2007-02-01 02:42,2007-02-04 01:05,hbe4678,hbe4678,,,0
2859,12459040,14517,6816088,13330,1,100,N,N,N,CP_Units,TT_Task,DT_FixedDUR2,RV_OK,TK_Complete,PK000MB69G,Issue MB691 RFQ,,,,0,0,0,0,24,0,0,0,,2005-07-19 00:00,2005-07-26 00:00,2007-06-07 08:01,2007-06-07 08:01,,2007-01-27 00:00,2007-01-27 00:00,,,2005-06-27 08:00,2005-06-29 17:00,,,,,PT_Normal,,,,,iOtGzMVcTxaOtOhupXcDFw,,,,N,0,0,,,2007-02-01 02:42,2007-02-04 01:05,hbe4678,hbe4678,,,0
2860,12459041,14517,6816088,13330,1,100,N,N,N,CP_Units,TT_Task,DT_FixedDUR2,RV_OK,TK_Complete,PK000MB69H,Receive Quotes for MB691,,,,0,0,0,0,320,0,0,0,,2005-07-27 00:00,2005-08-22 00:00,2007-06-07 08:01,2007-06-07 08:01,,2007-01-27 00:00,2007-01-27 00:00,,,2005-06-30 08:00,2005-08-26 17:00,,,,,PT_Normal,,,,,i4CWjNp3Tzmy0/TOMrFgfw,,,,N,0,0,,,2007-02-01 02:42,2007-02-04 01:05,hbe4678,hbe4678,,,0
2861,12459042,14517,6816088,13330,1,100,N,N,N,CP_Units,TT_Task,DT_FixedDUR2,RV_OK,TK_Complete,PK000MB69I,Eval Bids & Issue Recmd MB691,,,,0,0,0,0,128,0,0,0,,2005-09-06 00:00,2005-11-29 00:00,2007-06-07 08:01,2007-06-07 08:01,,2007-01-27 00:00,2007-01-27 00:00,,,2005-09-26 08:00,2005-10-17 17:00,,,,,PT_Normal,,,,,COMyi0y4Rp6IYs2Q+SXdlw,,,,N,0,0,,,2007-02-01 02:42,2007-02-04 01:05,hbe4678,hbe4678,,,0
2862,12459043,14517,6816088,13330,1,100,N,N,N,CP_Units,TT_Task,DT_FixedDUR2,RV_OK,TK_Complete,PK000MB69J,Final Negotiate/Interim Award - MB691,,,,0,0,0,0,24,0,0,0,,2005-11-30 00:00,2005-12-02 17:00,2007-06-07 08:01,2007-06-07 08:01,,2007-01-27 00:00,2007-01-27 00:00,,,2005-11-14 08:00,2005-11-16 17:00,,,,,PT_Normal,,,,,MaLET9c1RvCMp6KoA/09NQ,,,,N,0,0,,,2007-02-01 02:42,2007-02-04 01:05,hbe4678,hbe4678,,,0
2863,12459044,14517,6816088,13330,1,100,N,N,N,CP_Units,TT_Task,DT_FixedDUR2,RV_OK,TK_Complete,PK000MB69K,MB691 - Fabricate/PO Promise 101-B,,,,0,0,0,0,1040,0,0,0,,2005-12-05 00:00,2006-08-07 00:00,2008-02-16 08:01,2008-02-16 08:01,,2007-01-27 00:00,2007-01-27 00:00,,,2005-11-14 08:00,2006-05-16 17:00,,,,,PT_Normal,,,,,SAa+2pa2RyaYXCJM20fSww,,,,N,0,0,,,2007-02-01 02:42,2007-02-04 01:05,hbe4678,hbe4678,,,0
2864,12459045,14517,6816088,13330,1,100,N,N,N,CP_Units,TT_Task,DT_FixedDUR2,RV_OK,TK_Complete,PK000MB69O,MB691 - Transport/Customes of Equip. 101-B,,,,0,0,0,0,240,0,0,0,,2006-09-07 08:00,2006-12-11 17:00,2008-02-16 08:01,2008-02-16 08:01,,2007-01-27 00:00,2007-01-27 00:00,,,2006-09-07 08:00,2006-10-18 17:00,,,,,PT_Normal,,,,,XOskLLVaQlya8Cyzpe0kbA,,,,N,0,0,,,2007-02-01 02:42,2007-02-04 01:05,hbe4678,hbe4678,,,0
2865,12459046,14517,6816088,13330,1,100,N,N,N,CP_Units,TT_Task,DT_FixedDUR2,RV_OK,TK_Complete,PK000MB69P,Issue Formal P.O. for  MB691,,,,0,0,0,0,80,0,0,0,,2005-12-05 00:00,2005-12-05 00:00,2008-02-16 08:01,2008-02-16 08:01,,2007-01-27 00:00,2007-01-27 00:00,,,2005-11-14 08:00,2005-11-25 17:00,,,,,PT_Normal,,,,,lSaLczaQQmmRx/0b6qqZ1w,,,,N,0,0,,,2007-02-01 02:42,2007-02-04 01:05,hbe4678,hbe4678,,,0
2866,12459047,14517,6816088,13330,1,100,N,N,N,CP_Units,TT_Task,DT_FixedDUR2,RV_OK,TK_Complete,PK000MB81G,Issue MB810 RFQ,,,,0,,0,,24,,,0,,2005-03-28 08:00,2005-03-30 17:00,2007-06-19 08:01,2007-06-19 08:01,,2007-01-27 00:00,2007-01-27 00:00,,,2005-03-28 08:00,2005-03-30 17:00,,,,,PT_Normal,,,,,eZ4cqz48RRWm9V+AtQJgaA,,,,N,,,,,2007-02-01 02:42,2007-02-04 01:05,hbe4678,hbe4678,,,0
2867,12459048,14517,6816088,13330,1,100,N,N,N,CP_Units,TT_Task,DT_FixedDUR2,RV_OK,TK_Complete,PK000MB81H,Receive Quotes for MB810,,,,0,0,0,,160,,0,0,,2005-04-01 08:00,2005-04-27 17:00,2007-06-19 08:01,2007-06-19 08:01,,2007-01-27 00:00,2007-01-27 00:00,,,2005-04-01 08:00,2005-04-28 17:00,,,,,PT_Normal,,,,,o6MbvtijQV6s8SdSVX8YlA,,,,N,0,0,,,2007-02-01 02:42,2007-02-04 01:05,hbe4678,hbe4678,,,0
2868,12459049,14517,6816088,13330,1,100,N,N,N,CP_Units,TT_Task,DT_FixedDUR2,RV_OK,TK_Complete,PK000MB81I,Eval Bids & Issue Recmd MB810,,,,0,0,0,0,40,0,0,0,,2005-05-23 00:00,2005-05-26 00:00,2007-06-19 08:01,2007-06-19 08:01,,2007-01-27 00:00,2007-01-27 00:00,,,2005-05-27 08:00,2005-06-03 17:00,,,,,PT_Normal,,,,,meEf6L+FRRuAz+/dfTq7pA,,,,N,0,0,,,2007-02-01 02:42,2007-02-04 01:05,hbe4678,hbe4678,,,0
2869,12459050,14517,6816088,13330,1,100,N,N,N,CP_Units,TT_Task,DT_FixedDUR2,RV_OK,TK_Complete,PK000MB81J,Final Negotiate/Interim Award - MB810,,,,0,0,0,0,80,0,0,0,,2005-09-05 00:00,2005-09-09 00:00,2007-06-19 08:01,2007-06-19 08:01,,2007-01-27 00:00,2007-01-27 00:00,,,2005-09-26 08:00,2005-10-07 17:00,,,,,PT_Normal,,,,,LnnsaqRHRz+QcwFM0kb8Dw,,,,N,0,0,,,2007-02-01 02:42,2007-02-04 01:05,hbe4678,hbe4678,,,0
2870,12459051,14517,6816088,13330,1,100,N,N,N,CP_Units,TT_Task,DT_FixedDUR2,RV_OK,TK_Complete,PK000MB81K,MB810 - Fabricate/PO Promise 102-B,,,,0,0,0,0,1040,0,0,0,,2005-09-12 00:00,2006-07-14 00:00,2007-12-31 08:01,2007-12-31 08:01,,2007-01-27 00:00,2007-01-27 00:00,,,2005-10-17 08:00,2006-04-18 17:00,,,,,PT_Normal,,,,,Aj3TZEItSA2W3Rqm8Uu3iA,,,,N,0,0,,,2007-02-01 02:42,2007-02-04 01:05,hbe4678,hbe4678,,,0
2871,12459052,14517,6816088,13330,1,100,N,N,N,CP_Units,TT_Task,DT_FixedDUR2,RV_OK,TK_Complete,PK000MB81O,MB810 - Transport & Deliver of Equip. 101-B,,,,0,0,0,0,240,0,0,0,,2006-08-16 00:00,2006-09-14 00:00,2007-12-31 08:01,2007-12-31 08:01,,2007-01-27 00:00,2007-01-27 00:00,,,2006-08-07 08:00,2006-09-15 17:00,,,,,PT_Normal,,,,,p/Wk3iH3QHmH+YhvTjHcWQ,,,,N,0,0,,,2007-02-01 02:42,2007-02-04 01:05,hbe4678,hbe4678,,,0
2872,12459053,14517,6816088,13330,1,100,N,N,N,CP_Units,TT_Task,DT_FixedDUR2,RV_OK,TK_Complete,PK000MB64O,MB640 - Transport/Customes 101-B Springs & Hangers,,,,0,0,0,0,240,0,0,0,,2006-08-16 00:00,2006-09-14 00:00,2008-03-01 08:01,2008-03-01 08:01,,2007-01-27 00:00,2007-01-27 00:00,,,2006-10-02 08:00,2006-11-10 17:00,,,,,PT_Normal,,,,,QGfS1lhKRyaLlyDa5/d20g,,,,N,0,0,,,2007-02-01 02:42,2007-02-04 01:05,hbe4678,hbe4678,,,0
2873,12459054,14517,6816088,13330,1,100,N,N,N,CP_Units,TT_Task,DT_FixedDUR2,RV_OK,TK_Complete,PK000MB64P,Issue Formal P.O. for  MB640,,,,0,0,0,0,24,0,0,0,,2006-02-06 00:00,2006-02-20 00:00,2008-03-01 08:01,2008-03-01 08:01,,2007-01-27 00:00,2007-01-27 00:00,,,2006-01-30 08:00,2006-02-01 17:00,,,,,PT_Normal,,,,,WwHpppBDShKHnaBg1qR5Cw,,,,N,0,0,,,2007-02-01 02:42,2007-02-04 01:05,hbe4678,hbe4678,,,0
2874,12459055,14517,6816088,13330,1,100,N,N,N,CP_Units,TT_Task,DT_FixedDUR2,RV_OK,TK_Complete,PK000MB65G,Issue MB622 RFQ,,,,0,0,0,0,24,0,0,0,,2005-07-20 08:00,2005-07-26 00:00,2007-06-07 08:01,2007-06-07 08:01,,2007-01-27 00:00,2007-01-27 00:00,,,2005-07-20 08:00,2005-07-22 17:00,,,,,PT_Normal,,,,,Z1eiALBCRBGczBT1rPOBsw,,,,N,0,0,,,2007-02-01 02:42,2007-02-04 01:05,hbe4678,hbe4678,,,0
2875,12459056,14517,6816088,13330,1,100,N,N,N,CP_Units,TT_Task,DT_FixedDUR2,RV_OK,TK_Complete,PK000MB65H,Receive Quotes for MB622,,,,0,0,0,0,120,0,0,0,,2005-07-27 00:00,2005-08-18 00:00,2007-06-07 08:01,2007-06-07 08:01,,2007-01-27 00:00,2007-01-27 00:00,,,2005-08-03 08:00,2005-08-23 17:00,,,,,PT_Normal,,,,,1dg9SkuARMCZgHK/cdQpgQ,,,,N,0,0,,,2007-02-01 02:42,2007-02-04 01:05,hbe4678,hbe4678,,,0
2876,12459057,14517,6816088,13330,1,100,N,N,N,CP_Units,TT_Task,DT_FixedDUR2,RV_OK,TK_Complete,PK000MB65I,Eval Bids & Issue Recmd MB622,,,,0,0,0,0,128,0,0,0,,2005-09-26 08:00,2005-12-21 00:00,2007-06-07 08:01,2007-06-07 08:01,,2007-01-27 00:00,2007-01-27 00:00,,,2005-09-26 08:00,2005-10-17 17:00,,,,,PT_Normal,,,,,+3xpdI5sQ3KrWM8zKnC+6Q,,,,N,0,0,,,2007-02-01 02:42,2007-02-04 01:05,hbe4678,hbe4678,,,0
2877,12459058,14517,6816088,13330,1,100,N,N,N,CP_Units,TT_Task,DT_FixedDUR2,RV_OK,TK_Complete,PK000MB65J,Final Negotiate/Interim Award - MB622,,,,0,0,0,0,24,0,0,0,,2005-12-21 00:00,2006-02-06 00:00,2007-06-07 08:01,2007-06-07 08:01,,2007-01-27 00:00,2007-01-27 00:00,,,2006-02-01 08:01,2006-02-06 08:01,,,,,PT_Normal,,,,,obElzQfhQkKQ1qca8IdEMQ,,,,N,0,0,,,2007-02-01 02:42,2007-02-04 01:05,hbe4678,hbe4678,,,0
2878,12459059,14517,6816088,13330,1,100,N,N,N,CP_Units,TT_Task,DT_FixedDUR2,RV_OK,TK_Complete,PK000MB65O,MB622 - Transport/Customes 101-B Penthouse Circ Fans,,,,0,0,0,0,240,0,0,0,,2006-08-16 00:00,2006-09-14 00:00,2007-12-17 08:01,2007-12-17 08:01,,2007-01-27 00:00,2007-01-27 00:00,,,2006-09-04 08:00,2006-10-13 17:00,,,,,PT_Normal,,,,,xcTJNNO+SROYzTaoFR+cvA,,,,N,0,0,,,2007-02-01 02:42,2007-02-04 01:05,hbe4678,hbe4678,,,0
2879,12459060,14517,6816088,13330,1,100,N,N,N,CP_Units,TT_Task,DT_FixedDUR2,RV_OK,TK_Complete,PK000MBP4O,MB312 - Transport/Customes 101-B Radiant Cast Stringer Grids,,,,0,0,0,0,160,0,0,0,,2006-07-03 00:00,2006-07-21 00:00,2007-11-05 08:01,2007-11-05 08:01,,2007-01-27 00:00,2007-01-27 00:00,,,2006-08-01 08:00,2006-08-28 17:00,,,,,PT_Normal,,,,,90oUP4YIRqubZjBA54xu3A,,,,N,0,0,,,2007-02-01 02:42,2007-02-04 01:05,hbe4678,hbe4678,,,0
2880,12459061,14517,6816088,13330,1,100,N,N,N,CP_Units,TT_Task,DT_FixedDUR2,RV_OK,TK_Complete,PK000MB81P,Issue Formal P.O. for  MB810,,,,0,0,0,0,80,0,0,0,,2005-09-09 00:00,2005-10-21 17:00,2007-12-31 08:01,2007-12-31 08:01,,2007-01-27 00:00,2007-01-27 00:00,,,2005-10-10 08:00,2005-10-21 17:00,,,,,PT_Normal,,,,,j8ductafQbC33VgdL1co0w,,,,N,0,0,,,2007-02-01 02:42,2007-02-04 01:05,hbe4678,hbe4678,,,0
2881,12459062,14517,6816088,13330,1,100,N,N,N,CP_Units,TT_Task,DT_FixedDUR2,RV_OK,TK_Complete,PK000MBP1G,101-B Prepare & Issue Shop Fab RFQ to Vendors,,,,0,,0,,24,,,0,,2005-03-23 08:00,2005-03-25 17:00,2007-06-07 08:01,2007-06-07 08:01,,2007-01-27 00:00,2007-01-27 00:00,,,2005-03-23 08:00,2005-03-25 17:00,,,,,PT_Normal,,,,,RWIjRn7gTr69B1KEPCxWrg,,,,N,,,,,2007-02-01 02:42,2007-02-04 01:05,hbe4678,hbe4678,,,0
2882,12459063,14517,6816088,13330,1,100,N,N,N,CP_Units,TT_Task,DT_FixedDUR2,RV_OK,TK_Complete,PK000MBP1H,101-B Receive Quotes Shop Fab,,,,0,,0,,48,,,0,,2005-03-28 08:00,2005-04-04 17:00,2007-06-07 08:01,2007-06-07 08:01,,2007-01-27 00:00,2007-01-27 00:00,,,2005-03-28 08:00,2005-04-04 17:00,,,,,PT_Normal,,,,,5AIggPVKQZGVkUuFTMuU/w,,,,N,,,,,2007-02-01 02:42,2007-02-04 01:05,hbe4678,hbe4678,,,0
2883,12459064,14517,6816088,13330,1,100,N,N,N,CP_Units,TT_Task,DT_FixedDUR2,RV_OK,TK_Complete,PK000MBP1I,Eval Bids & Issue Recmd 101-B Shop Fab,,,,0,,0,,40,,,0,,2005-04-12 08:00,2005-04-12 17:00,2007-06-07 08:01,2007-06-07 08:01,,2007-01-27 00:00,2007-01-27 00:00,,,2005-04-12 08:00,2005-04-18 17:00,,,,,PT_Normal,,,,,Fc3iLf8IRnOc6hWwcGkSvQ,,,,N,,,,,2007-02-01 02:42,2007-02-04 01:05,hbe4678,hbe4678,,,0
2884,12459065,14517,6816088,13330,1,100,N,N,N,CP_Units,TT_Task,DT_FixedDUR2,RV_OK,TK_Complete,PK000MBP1J,Final Negotiate/Interim Award - 101-B Shop Fab,,,,0,0,0,0,80,0,0,0,,2005-04-15 00:00,2005-09-09 00:00,2007-06-07 08:01,2007-06-07 08:01,,2007-01-27 00:00,2007-01-27 00:00,,,2005-09-09 08:01,2005-09-23 08:01,,,,,PT_Normal,,,,,rehlRQO9Tk6SaDFepah+hQ,,,,N,0,0,,,2007-02-01 02:42,2007-02-04 01:05,hbe4678,hbe4678,,,0
2885,12459066,14517,6816088,13330,1,100,N,N,N,CP_Units,TT_Task,DT_FixedDUR2,RV_OK,TK_Complete,PK000MBP1K,MB221 - Fab/PO Promise 101-B Radiant Steel Panels,,,,0,0,0,0,1120,0,0,0,,2005-09-09 00:00,2006-08-01 00:00,2007-06-07 08:01,2007-06-07 08:01,,2007-01-27 00:00,2007-01-27 00:00,,,2005-09-23 08:01,2006-04-11 08:01,,,,,PT_Normal,,,,,vu0n89v3RwafgLfBp02ciw,,,,N,0,0,,,2007-02-01 02:42,2007-02-04 01:05,hbe4678,hbe4678,,,0
2886,12459067,14517,6816088,13330,1,100,N,N,N,CP_Units,TT_Task,DT_FixedDUR2,RV_OK,TK_Complete,PK000MBP1M,MB221 - Transport/Customes 101-B Radiant Steel Panels,,,,0,0,0,0,240,0,0,0,,2006-08-16 00:00,2006-09-16 00:00,2007-06-07 08:01,2007-06-07 08:01,,2007-01-27 00:00,2007-01-27 00:00,,,2006-11-27 08:00,2007-01-05 17:00,,,,,PT_Normal,,,,,VsSJJXkAT0GUq7EBdYXwJA,,,,N,0,0,,,2007-02-01 02:42,2007-02-04 01:05,hbe4678,hbe4678,,,0
2887,12459068,14517,6816088,13330,1,100,N,N,N,CP_Units,TT_Task,DT_FixedDUR2,RV_OK,TK_Complete,PK000MBP1P,Issue Formal P.O. for 101-B Shop Fab,,,,0,0,0,0,24,0,0,0,,2005-09-09 00:00,2005-10-21 00:00,2007-06-07 08:01,2007-06-07 08:01,,2007-01-27 00:00,2007-01-27 00:00,,,2005-09-23 08:01,2005-09-28 08:01,,,,,PT_Normal,,,,,HcApvgCsSJCb3NPw9fGFSw,,,,N,0,0,,,2007-02-01 02:42,2007-02-04 01:05,hbe4678,hbe4678,,,0
2888,12459069,14517,6816088,13330,1,100,N,N,N,CP_Units,TT_Task,DT_FixedDUR2,RV_OK,TK_Complete,PK000MBP1Q,MB221 - Fab/PO Promise 101-B Radiant Coil/Harps,,,,0,0,0,0,1040,0,0,0,,2005-09-09 00:00,2006-10-27 00:00,2007-11-05 08:01,2007-11-05 08:01,,2007-01-27 00:00,2007-01-27 00:00,,,2006-08-17 08:00,2007-02-14 17:00,,,,,PT_Normal,,,,,tuZteO/nQnq83Ml5D2/ZrQ,,,,N,0,0,,,2007-02-01 02:42,2007-02-04 01:05,hbe4678,hbe4678,,,0
2889,12459070,14517,6816088,13330,1,100,N,N,N,CP_Units,TT_Task,DT_FixedDUR2,RV_OK,TK_Complete,PK000MBP1R,MB221 - Fab/PO Promise 101-B Convection Modules,,,,0,0,0,0,1040,0,0,0,,2005-09-09 00:00,2006-10-27 00:00,2007-10-27 08:01,2007-10-27 08:01,,2007-01-27 00:00,2007-01-27 00:00,,,2006-11-06 08:00,2007-05-04 17:00,,,,,PT_Normal,,,,,LQ9C+TLUSGmUl7Qy8vTyFw,,,,N,0,0,,,2007-02-01 02:42,2007-02-04 01:05,hbe4678,hbe4678,,,0
2890,12459071,14517,6816088,13330,1,100,N,N,N,CP_Units,TT_Task,DT_FixedDUR2,RV_OK,TK_Complete,PK000MBP1S,MB221 - Fabr/PO Promise 101-B Radiant Ducting,,,,0,0,0,0,1040,0,0,0,,2005-09-09 00:00,2006-10-16 08:00,2007-09-19 08:01,2007-09-19 08:01,,2007-01-27 00:00,2007-01-27 00:00,,,2006-04-17 08:00,2006-10-13 17:00,,,,,PT_Normal,,,,,p9uD3b59RMChv6k6uzdyHg,,,,N,0,0,,,2007-02-01 02:42,2007-02-04 01:05,hbe4678,hbe4678,,,0
2891,12459072,14517,6816088,13330,1,100,N,N,N,CP_Units,TT_Task,DT_FixedDUR2,RV_OK,TK_Complete,PK000MBP1T,MB221 - Fab/PO Promise 101-B Crossover Pipe,,,,0,0,0,0,1120,0,0,0,,2006-09-11 08:00,2006-10-27 17:00,2008-01-20 08:01,2008-01-20 08:01,,2007-01-27 00:00,2007-01-27 00:00,,,2006-09-11 08:00,2007-03-23 17:00,,,,,PT_Normal,,,,,NMKeizDBQcyk+5UbqZw23w,,,,N,0,0,,,2007-02-01 02:42,2007-02-04 01:05,hbe4678,hbe4678,,,0
2892,12459073,14517,6816088,13330,1,100,N,N,N,CP_Units,TT_Task,DT_FixedDUR2,RV_OK,TK_Complete,PK000MBP1U,MB221 - Transport/Customes 101-B Radiant Harps,,,,0,0,0,0,240,0,0,0,,2006-11-13 08:00,2006-12-09 00:00,2007-11-05 08:01,2007-11-05 08:01,,2007-01-27 00:00,2007-01-27 00:00,,,2006-11-13 08:00,2006-12-22 17:00,,,,,PT_Normal,,,,,hl/2cEXJSl60uPzMXGO81g,,,,N,0,0,,,2007-02-01 02:42,2007-02-04 01:05,hbe4678,hbe4678,,,0
2893,12459074,14517,6816088,13330,1,100,N,N,N,CP_Units,TT_Task,DT_FixedDUR2,RV_OK,TK_Complete,PK000MBP1V,MB221 - Transport/Customes 101-B Convection Modules,,,,0,0,0,0,240,0,0,0,,2006-11-13 08:00,2006-12-09 00:00,2007-10-27 08:01,2007-10-27 08:01,,2007-01-27 00:00,2007-01-27 00:00,,,2006-11-13 08:00,2006-12-22 17:00,,,,,PT_Normal,,,,,DmE3vQaBSnOiwOiFBqdPSw,,,,N,0,0,,,2007-02-01 02:42,2007-02-04 01:05,hbe4678,hbe4678,,,0
2894,12459075,14517,6816088,13330,1,100,N,N,N,CP_Units,TT_Task,DT_FixedDUR2,RV_OK,TK_Complete,PK000MBP1X,MB221 - Transport/Customes 101-B Radiant Ducting,,,,0,0,0,0,240,0,0,0,,2006-11-13 08:00,2006-12-09 00:00,2007-09-19 08:01,2007-09-19 08:01,,2007-01-27 00:00,2007-01-27 00:00,,,2006-11-13 08:00,2006-12-22 17:00,,,,,PT_Normal,,,,,MUg1+WxYT/6cN41mmscJIQ,,,,N,0,0,,,2007-02-01 02:42,2007-02-04 01:05,hbe4678,hbe4678,,,0
2895,12459076,14517,6816088,13330,1,100,N,N,N,CP_Units,TT_Task,DT_FixedDUR2,RV_OK,TK_Complete,PK000MBP1Y,MB221 - Transport/Customes 101-B Crossover,,,,0,0,0,0,240,0,0,0,,2006-11-13 08:00,2006-12-09 00:00,2008-01-20 08:01,2008-01-20 08:01,,2007-01-27 00:00,2007-01-27 00:00,,,2006-11-13 08:00,2006-12-22 17:00,,,,,PT_Normal,,,,,DXg29tceR5++32sO4Cy7LA,,,,N,0,0,,,2007-02-01 02:42,2007-02-04 01:05,hbe4678,hbe4678,,,0
2896,12459077,14517,6816088,13330,1,100,N,N,N,CP_Units,TT_Task,DT_FixedDUR2,RV_OK,TK_Complete,PK000MBP3G,Issue 101-B Pressure Parts RFQ,,,,0,,0,,24,,,0,,2005-04-05 08:00,2005-04-06 17:00,2007-10-27 08:01,2007-10-27 08:01,,2007-01-27 00:00,2007-01-27 00:00,,,2005-04-05 08:00,2005-04-07 17:00,,,,,PT_Normal,,,,,9knFBwwcSaiCySMbgzML4g,,,,N,,,,,2007-02-01 02:42,2007-02-04 01:05,hbe4678,hbe4678,,,0
2897,12459078,14517,6816088,13330,1,100,N,N,N,CP_Units,TT_Task,DT_FixedDUR2,RV_OK,TK_Complete,PK000MBP3H,Receive Quotes for 101-B Pressure Part,,,,0,0,0,,120,,0,0,,2005-04-07 08:00,2005-05-16 00:00,2007-10-27 08:01,2007-10-27 08:01,,2007-01-27 00:00,2007-01-27 00:00,,,2005-04-07 08:00,2005-04-27 17:00,,,,,PT_Normal,,,,,JLKOmIPFRrKJRsnIYmQacw,,,,N,0,0,,,2007-02-01 02:42,2007-02-04 01:05,hbe4678,hbe4678,,,0
2898,12459079,14517,6816088,13330,1,100,N,N,N,CP_Units,TT_Task,DT_FixedDUR2,RV_OK,TK_Complete,PK000MBP3I,Eval Bids & Issue Recmd 101-B Pressure Parts,,,,0,0,0,0,40,0,0,0,,2005-06-13 00:00,2005-06-17 17:00,2007-10-27 08:01,2007-10-27 08:01,,2007-01-27 00:00,2007-01-27 00:00,,,2005-06-15 08:00,2005-06-21 17:00,,,,,PT_Normal,,,,,t9Dx1vPNRQer8b78WUtB4g,,,,N,0,0,,,2007-02-01 02:42,2007-02-04 01:05,hbe4678,hbe4678,,,0
2899,12459080,14517,6816088,13330,1,100,N,N,N,CP_Units,TT_Task,DT_FixedDUR2,RV_OK,TK_Complete,PK000MBP3J,Final Negotiate/Interim Award - Pressure Parts,,,,0,0,0,0,80,0,0,0,,2005-08-29 08:00,2005-09-30 00:00,2007-10-27 08:01,2007-10-27 08:01,,2007-01-27 00:00,2007-01-27 00:00,,,2005-08-29 08:00,2005-09-09 17:00,,,,,PT_Normal,,,,,t/4myuzMSj63rW69pgKPbA,,,,N,0,0,,,2007-02-01 02:42,2007-02-04 01:05,hbe4678,hbe4678,,,0
2900,12459081,14517,6816088,13330,1,100,N,N,N,CP_Units,TT_Task,DT_FixedDUR2,RV_OK,TK_Complete,PK000MBP3K,MB311 - Fab/Exworks 101-B Radiant Tube & Pipe,,,,0,0,0,0,1200,0,0,0,,2005-10-03 00:00,2006-05-01 00:00,2007-11-05 08:01,2007-11-05 08:01,,2007-01-27 00:00,2007-01-27 00:00,,,2005-10-17 08:00,2006-05-16 17:00,,,,,PT_Normal,,,,,Y3sXjLPgRFuLulS60fyEpg,,,,N,0,0,,,2007-02-01 02:42,2007-02-04 01:05,hbe4678,hbe4678,,,0
2901,12459082,14517,6816088,13330,1,100,N,N,N,CP_Units,TT_Task,DT_FixedDUR2,RV_OK,TK_Complete,PK000MB68J,Final Negotiate/Interim Award - MB692,,,,0,0,0,0,24,0,0,0,,2006-03-30 00:00,2006-04-03 00:00,2008-04-12 08:01,2008-04-12 08:01,,2007-01-27 00:00,2007-01-27 00:00,,,2006-04-21 08:00,2006-04-25 17:00,,,,,PT_Normal,,,,,zkwlDkzrRDiqKN7dKUzB0w,,,,N,0,0,,,2007-02-01 02:42,2007-02-04 01:05,hbe4678,hbe4678,,,0
2902,12459083,14517,6816088,13330,1,100,N,N,N,CP_Units,TT_Task,DT_FixedDUR2,RV_OK,TK_Complete,PK000MC23I,Eval Bids & Issue Recmd MC230,,,,0,0,0,0,40,0,0,0,,2005-05-24 08:00,2005-06-24 00:00,2007-01-09 08:01,2007-01-09 08:01,,2007-01-27 00:00,2007-01-27 00:00,,,2005-05-24 08:00,2005-05-31 17:00,,,,,PT_Normal,,,,,ZmpwP9lvTUmyjkVCaKcskw,,,,N,0,0,,,2007-02-01 02:42,2007-02-04 01:05,hbe4678,hbe4678,,,0
2903,12459084,14517,6816088,13330,1,100,N,N,N,CP_Units,TT_Task,DT_FixedDUR2,RV_OK,TK_Complete,PK000MC23J,Final Negotiate/Interim Award - MC230,,,,0,0,0,0,32,0,0,0,,2005-11-01 00:00,2005-11-09 00:00,2007-01-09 08:01,2007-01-09 08:01,,2007-01-27 00:00,2007-01-27 00:00,,,2005-10-31 08:00,2005-11-03 17:00,,,,,PT_Normal,,,,,NyU7edp6QtG9ToG8Ahi/1g,,,,N,0,0,,,2007-02-01 02:42,2007-02-04 01:05,hbe4678,hbe4678,,,0
2904,12459085,14517,6816088,13330,1,100,N,N,N,CP_Units,TT_Task,DT_FixedDUR2,RV_OK,TK_Complete,PK000MC23K,MC230 - Fabricate/PO Promise 105/107/172/183-C,,,,0,0,0,0,1600,0,0,0,,2005-11-09 00:00,2006-10-16 00:00,2007-07-02 08:01,2007-07-02 08:01,,2007-01-27 00:00,2007-01-27 00:00,,,2005-10-31 08:00,2006-08-08 17:00,,,,,PT_Normal,,,,,OaBqxMWAS0SE4amCtEWoEg,,,,N,0,0,,,2007-02-01 02:42,2007-02-04 01:05,hbe4678,hbe4678,,,0
2905,12459086,14517,6816088,13330,1,100,N,N,N,CP_Units,TT_Task,DT_FixedDUR2,RV_OK,TK_Complete,PK000MC23M,Requote/Bid Condition/Final Tab - MC230,,,,0,0,0,0,160,0,0,0,,2005-07-22 00:00,2005-10-28 00:00,2007-01-09 08:01,2007-01-09 08:01,,2007-01-27 00:00,2007-01-27 00:00,,,2005-06-27 08:00,2005-07-26 17:00,,,,,PT_Normal,,,,,bDebp/+ISGmrszNWmOjQjg,,,,N,0,0,,,2007-02-01 02:42,2007-02-04 01:05,hbe4678,hbe4678,,,0
2906,12459087,14517,6816088,13330,1,100,N,N,N,CP_Units,TT_Task,DT_FixedDUR2,RV_OK,TK_Complete,PK000MBP3M,Requote/Bid Condition/Final Tab - Pressure Parts,,,,0,0,0,0,160,0,0,0,,2005-09-19 00:00,2005-09-28 00:00,2007-11-05 08:01,2007-11-05 08:01,,2007-01-27 00:00,2007-01-27 00:00,,,2005-09-27 08:00,2005-10-24 17:00,,,,,PT_Normal,,,,,K8w3gK8vQw2TCIPY4lcfgw,,,,N,0,0,,,2007-02-01 02:42,2007-02-04 01:05,hbe4678,hbe4678,,,0
2907,12459088,14517,6816088,13330,1,100,N,N,N,CP_Units,TT_Task,DT_FixedDUR2,RV_OK,TK_Complete,PK000MBP3O,MB311 - Fab/Exworks 101-B Convection Tube & Pipe,,,,0,0,0,0,1200,0,0,0,,2005-10-03 00:00,2006-05-16 00:00,2007-10-27 08:01,2007-10-27 08:01,,2007-01-27 00:00,2007-01-27 00:00,,,2005-10-17 08:00,2006-05-16 17:00,,,,,PT_Normal,,,,,TKATndkFQ/CoCTNouGfV+w,,,,N,0,0,,,2007-02-01 02:42,2007-02-04 01:05,hbe4678,hbe4678,,,0
2908,12459089,14517,6816088,13330,1,100,N,N,N,CP_Units,TT_Task,DT_FixedDUR2,RV_OK,TK_Complete,PK000MBP3P,Issue Formal P.O. for 101-B Pressure Parts,,,,0,0,0,0,24,0,0,0,,2005-09-27 08:00,2005-11-16 00:00,2007-11-05 08:01,2007-11-05 08:01,,2007-01-27 00:00,2007-01-27 00:00,,,2005-09-27 08:00,2005-09-29 17:00,,,,,PT_Normal,,,,,i9K8QyYBQH+3zjezsO440A,,,,N,0,0,,,2007-02-01 02:42,2007-02-04 01:05,hbe4678,hbe4678,,,0
2909,12459090,14517,6816088,13330,1,100,N,N,N,CP_Units,TT_Task,DT_FixedDUR2,RV_OK,TK_Complete,PK000MBP3Q,MB311 - Fab/Exworks 101-B Convection Fittings,,,,0,0,0,0,1200,0,0,0,,2005-10-03 00:00,2006-05-16 00:00,2007-10-27 08:01,2007-10-27 08:01,,2007-01-27 00:00,2007-01-27 00:00,,,2005-10-17 08:00,2006-05-16 17:00,,,,,PT_Normal,,,,,3B0Z1mv1SL+PokNFQBEgmw,,,,N,0,0,,,2007-02-01 02:42,2007-02-04 01:05,hbe4678,hbe4678,,,0
2910,12459091,14517,6816088,13330,1,100,N,N,N,CP_Units,TT_Task,DT_FixedDUR2,RV_OK,TK_Complete,PK000MBP3R,MB311 - Fab/Exworks 101-B Crossover Tube & Pipe,,,,0,0,0,0,1200,0,0,0,,2005-10-03 00:00,2006-06-05 00:00,2008-01-20 08:01,2008-01-20 08:01,,2007-01-27 00:00,2007-01-27 00:00,,,2005-10-17 08:00,2006-05-16 17:00,,,,,PT_Normal,,,,,6ssowr/OQpGGB6bcw/uFIA,,,,N,0,0,,,2007-02-01 02:42,2007-02-04 01:05,hbe4678,hbe4678,,,0
2911,12459092,14517,6816088,13330,1,100,N,N,N,CP_Units,TT_Task,DT_FixedDUR2,RV_OK,TK_Complete,PK000MBP3S,MB311 - Fab/Exworks 101-B Crossover Fittings,,,,0,0,0,0,1200,0,0,0,,2005-10-03 00:00,2006-06-05 00:00,2008-01-20 08:01,2008-01-20 08:01,,2007-01-27 00:00,2007-01-27 00:00,,,2005-10-17 08:00,2006-05-16 17:00,,,,,PT_Normal,,,,,AM6oEgSHRvGnEEAcDm+LmA,,,,N,0,0,,,2007-02-01 02:42,2007-02-04 01:05,hbe4678,hbe4678,,,0
2912,12459093,14517,6816088,13330,1,100,N,N,N,CP_Units,TT_Task,DT_FixedDUR2,RV_OK,TK_Complete,PK000MBP3T,MB311 - Shop Recv - 101-B Radiant Fittings,,,,0,0,0,0,80,0,0,0,,2005-09-28 00:00,2006-04-03 00:00,2007-11-05 08:01,2007-11-05 08:01,,2007-01-27 00:00,2007-01-27 00:00,,,2006-03-27 08:00,2006-04-07 17:00,,,,,PT_Normal,,,,,0tKwENmZRUu0+UhsG7ImzQ,,,,N,0,0,,,2007-02-01 02:42,2007-02-04 01:05,hbe4678,hbe4678,,,0
2913,12459094,14517,6816088,13330,1,100,N,N,N,CP_Units,TT_Task,DT_FixedDUR2,RV_OK,TK_Complete,PK000MBP3U,MB311 - Shop Recv - 101-B Convection Tube & Pipe,,,,0,0,0,0,80,0,0,0,,2006-03-10 00:00,2006-05-22 17:00,2007-10-27 08:01,2007-10-27 08:01,,2007-01-27 00:00,2007-01-27 00:00,,,2006-05-16 08:00,2006-05-29 17:00,,,,,PT_Normal,,,,,gBgjbt07SIynDyhkWqIodw,,,,N,0,0,,,2007-02-01 02:42,2007-02-04 01:05,hbe4678,hbe4678,,,0
2914,12459095,14517,6816088,13330,1,100,N,N,N,CP_Units,TT_Task,DT_FixedDUR2,RV_OK,TK_Complete,PK000MBP3V,MB311 - Shop Recv - 101-B Crossover Tube & Pipe,,,,0,0,0,0,80,0,0,0,,2006-05-30 00:00,2006-06-05 00:00,2008-01-20 08:01,2008-01-20 08:01,,2007-01-27 00:00,2007-01-27 00:00,,,2006-06-12 08:00,2006-06-23 17:00,,,,,PT_Normal,,,,,KhCcRMXrQFu++K/plBE2Ew,,,,N,0,0,,,2007-02-01 02:42,2007-02-04 01:05,hbe4678,hbe4678,,,0
2915,12459096,14517,6816088,13330,1,100,N,N,N,CP_Units,TT_Task,DT_FixedDUR2,RV_OK,TK_Complete,PK000MBP3W,MB311 - Shop Recv - 101-B Crossover Fittings,,,,0,0,0,0,80,0,0,0,,2006-05-30 00:00,2006-06-05 00:00,2008-01-20 08:01,2008-01-20 08:01,,2007-01-27 00:00,2007-01-27 00:00,,,2006-06-12 08:00,2006-06-23 17:00,,,,,PT_Normal,,,,,GJbE/P+pT8+0xwcYbEIXiQ,,,,N,0,0,,,2007-02-01 02:42,2007-02-04 01:05,hbe4678,hbe4678,,,0
2916,12459097,14517,6816088,13330,1,100,N,N,N,CP_Units,TT_Task,DT_FixedDUR2,RV_OK,TK_Complete,PK000MBP3X,MB311 - Shop Recv - 101-B Convection Fittings,,,,0,0,0,0,80,0,0,0,,2006-05-03 00:00,2006-05-16 00:00,2007-10-27 08:01,2007-10-27 08:01,,2007-01-27 00:00,2007-01-27 00:00,,,2006-06-12 08:00,2006-06-23 17:00,,,,,PT_Normal,,,,,BMkKtEslRSSXYL+0JfB3QA,,,,N,0,0,,,2007-02-01 02:42,2007-02-04 01:05,hbe4678,hbe4678,,,0
2917,12459098,14517,6816088,13330,1,100,N,N,N,CP_Units,TT_Task,DT_FixedDUR2,RV_OK,TK_Complete,PK000MBP3Z,MB311 - Shop Recv - 101-B Radiant Tube & Pipe,,,,0,0,0,0,80,0,0,0,,2006-05-01 00:00,2006-05-01 00:00,2007-11-05 08:01,2007-11-05 08:01,,2007-01-27 00:00,2007-01-27 00:00,,,2006-06-12 08:00,2006-06-23 17:00,,,,,PT_Normal,,,,,wrgzzyQiRse6i0RSH7DpgQ,,,,N,0,0,,,2007-02-01 02:42,2007-02-04 01:05,hbe4678,hbe4678,,,0
2918,12459099,14517,6816088,13330,1,100,N,N,N,CP_Units,TT_Task,DT_FixedDUR2,RV_OK,TK_Complete,PK000MBP4G,Issue 101-B Cast Material RFQ,,,,0,,0,,24,,,0,,2005-03-31 08:00,2005-04-04 17:00,2007-11-05 08:01,2007-11-05 08:01,,2007-01-27 00:00,2007-01-27 00:00,,,2005-03-31 08:00,2005-04-04 17:00,,,,,PT_Normal,,,,,ntBf7pTqSXC79G+04z3Y4A,,,,N,,,,,2007-02-01 02:42,2007-02-04 01:05,hbe4678,hbe4678,,,0
2919,12459100,14517,6816088,13330,1,100,N,N,N,CP_Units,TT_Task,DT_FixedDUR2,RV_OK,TK_Complete,PK000MBP4H,Receive Quotes for 101-B Cast Material,,,,0,0,0,,144,,0,0,,2005-04-05 08:00,2005-05-04 00:00,2007-11-05 08:01,2007-11-05 08:01,,2007-01-27 00:00,2007-01-27 00:00,,,2005-04-05 08:00,2005-04-28 17:00,,,,,PT_Normal,,,,,c2pAdIl5RnSEEE5rax57qg,,,,N,0,0,,,2007-02-01 02:42,2007-02-04 01:05,hbe4678,hbe4678,,,0
2920,12459101,14517,6816088,13330,1,100,N,N,N,CP_Units,TT_Task,DT_FixedDUR2,RV_OK,TK_Complete,PK000MBP4I,Eval Bids & Issue Recmd 101-B Cast Material,,,,0,0,0,0,40,0,0,0,,2005-06-01 08:00,2005-06-09 17:00,2007-11-05 08:01,2007-11-05 08:01,,2007-01-27 00:00,2007-01-27 00:00,,,2005-06-01 08:00,2005-06-07 17:00,,,,,PT_Normal,,,,,4ESeT6WTTm2K2O0YIPtHVw,,,,N,0,0,,,2007-02-01 02:42,2007-02-04 01:05,hbe4678,hbe4678,,,0
2921,12459102,14517,6816088,13330,1,100,N,N,N,CP_Units,TT_Task,DT_FixedDUR2,RV_OK,TK_Complete,PK000MBP4J,Final Negotiate/Interim Award - Cast Material,,,,0,0,0,0,80,0,0,0,,2005-09-01 00:00,2005-09-09 00:00,2007-11-05 08:01,2007-11-05 08:01,,2007-01-27 00:00,2007-01-27 00:00,,,2005-08-29 08:00,2005-09-09 17:00,,,,,PT_Normal,,,,,xeJH5/gTQKmWPdc2oLOakA,,,,N,0,0,,,2007-02-01 02:42,2007-02-04 01:05,hbe4678,hbe4678,,,0
2922,12459103,14517,6816088,13330,1,100,N,N,N,CP_Units,TT_Task,DT_FixedDUR2,RV_OK,TK_Complete,PK000MBP4K,MB312 - Fab/PO Promise 101-B Radiant Cast Fittings,,,,0,0,0,0,1760,0,0,0,,2005-10-12 00:00,2006-07-11 00:00,2007-11-05 08:01,2007-11-05 08:01,,2007-01-27 00:00,2007-01-27 00:00,,,2005-10-17 08:00,2006-08-22 17:00,,,,,PT_Normal,,,,,IbBLKt6aRJOGD3YnH/rs+Q,,,,N,0,0,,,2007-02-01 02:42,2007-02-04 01:05,hbe4678,hbe4678,,,0
2923,12459104,14517,6816088,13330,1,100,N,N,N,CP_Units,TT_Task,DT_FixedDUR2,RV_OK,TK_Complete,PK000MC23H,Receive Quotes for MC230,,,,0,0,0,,120,,0,0,,2005-03-31 08:00,2005-05-02 17:00,2007-01-09 08:01,2007-01-09 08:01,,2007-01-27 00:00,2007-01-27 00:00,,,2005-03-31 08:00,2005-04-20 17:00,,,,,PT_Normal,,,,,4Rf757WZSni1OYUWW00qdg,,,,N,0,0,,,2007-02-01 02:42,2007-02-04 01:05,hbe4678,hbe4678,,,0
2924,12459105,14517,6816088,13330,1,100,N,N,N,CP_Units,TT_Task,DT_FixedDUR2,RV_OK,TK_Complete,PK000MBP4M,Requote/Bid Condition/Final Tab - Cast Material,,,,0,0,0,0,80,0,0,0,,2005-10-12 00:00,2005-10-17 00:00,2007-11-05 08:01,2007-11-05 08:01,,2007-01-27 00:00,2007-01-27 00:00,,,2006-09-01 08:00,2006-09-14 17:00,,,,,PT_Normal,,,,,ERQ2aB+AQje7qsqiqWoo1A,,,,N,0,0,,,2007-02-01 02:42,2007-02-04 01:05,hbe4678,hbe4678,,,0
2925,12459106,14517,6816088,13330,1,100,N,N,N,CP_Units,TT_Task,DT_FixedDUR2,RV_OK,TK_Complete,PK000MC32G,Issue MC311 RFQ,,,,0,,0,,40,,,0,,2005-03-22 08:00,2005-03-28 17:00,2007-05-15 08:02,2007-05-15 08:02,,2007-01-27 00:00,2007-01-27 00:00,,,2005-03-22 08:00,2005-03-28 17:00,,,,,PT_Normal,,,,,O0HLLUCJT5+60R56S0AD3g,,,,N,,,,,2007-02-01 02:42,2007-02-04 01:05,hbe4678,hbe4678,,,0
2926,12459107,14517,6816088,13330,1,100,N,N,N,CP_Units,TT_Task,DT_FixedDUR2,RV_OK,TK_Complete,PK000MC32H,Receive Quotes for MC311,,,,0,0,0,,120,,0,0,,2005-03-29 08:00,2005-06-03 17:00,2007-05-15 08:02,2007-05-15 08:02,,2007-01-27 00:00,2007-01-27 00:00,,,2005-03-29 08:00,2005-04-18 17:00,,,,,PT_Normal,,,,,y5HBIw+hTVqLbaZ736RK/g,,,,N,0,0,,,2007-02-01 02:42,2007-02-04 01:05,hbe4678,hbe4678,,,0
2927,12459108,14517,6816088,13330,1,100,N,N,N,CP_Units,TT_Task,DT_FixedDUR2,RV_OK,TK_Complete,PK000MC32I,Eval Bids & Issue Recmd MC311,,,,0,0,0,0,160,0,0,0,,2005-08-12 08:00,2005-11-14 00:00,2007-05-15 08:02,2007-05-15 08:02,,2007-01-27 00:00,2007-01-27 00:00,,,2005-08-12 08:00,2005-09-08 17:00,,,,,PT_Normal,,,,,n5CXDHgYTn+ICLlFjoqr4w,,,,N,0,0,,,2007-02-01 02:42,2007-02-04 01:05,hbe4678,hbe4678,,,0
2928,12459109,14517,6816088,13330,1,100,N,N,N,CP_Units,TT_Task,DT_FixedDUR2,RV_OK,TK_Complete,PK000MC32J,Final Negotiate/Interim Award - MC311,,,,0,0,0,0,24,0,0,0,,2005-11-14 00:00,2005-11-16 00:00,2007-05-15 08:02,2007-05-15 08:02,,2007-01-27 00:00,2007-01-27 00:00,,,2005-12-01 08:00,2005-12-05 17:00,,,,,PT_Normal,,,,,AwpnA2X0QVq9A8adBgLaTg,,,,N,0,0,,,2007-02-01 02:42,2007-02-04 01:05,hbe4678,hbe4678,,,0
2929,12459110,14517,6816088,13330,1,100,N,N,N,CP_Units,TT_Task,DT_FixedDUR2,RV_OK,TK_Active,PK000MC32K,MC311 - Fabricate/PO Promise KBR S&T EXCH,,608.033333333333,0,112,0,0,0,1200,0,0,0,,2005-11-16 00:00,,2007-05-15 08:02,2007-06-04 08:02,2007-02-15 17:00,2007-01-29 08:00,2007-02-15 17:00,2007-01-29 08:00,2007-02-15 17:00,2005-12-06 08:00,2006-07-05 17:00,,2007-05-15 08:02,2007-06-04 08:02,,PT_Normal,,,,,4WnzT/hnTp63qDUbbZvwOg,,,,N,0,0,,,2007-02-01 02:42,2007-02-04 01:00,hbe4678,hbe4678,2007-01-29 08:00,2007-02-15 17:00,112
2930,12459111,14517,6816088,4050,1,0,N,N,N,CP_Units,TT_Task,DT_FixedDUR2,RV_OK,TK_NotStart,PK000MC32O,MC311 - Transport/Customes KBR S&T EXCH,,864.033333333333,0,168,0,0,0,240,0,0,0,,,,2007-07-23 08:01,2007-08-13 08:01,,2007-04-05 16:59,2007-04-26 16:59,2007-04-05 16:59,2007-04-26 16:59,2007-04-05 16:59,2007-05-05 16:59,,2007-07-23 08:01,2007-08-13 08:01,,PT_Normal,,,,,/J4YGV6xRCKHOCQ9e19dIw,,,,N,0,0,,,2007-02-01 02:42,2007-02-04 01:00,hbe4678,hbe4678,2007-04-05 16:59,2007-04-26 16:59,168
2931,12459112,14517,6816088,13330,1,100,N,N,N,CP_Units,TT_Task,DT_FixedDUR2,RV_OK,TK_Complete,PK000MC32P,Issue Formal P.O. for  MC311,,,,0,0,0,0,24,0,0,0,,2005-11-16 00:00,2006-01-13 00:00,2007-06-04 08:02,2007-06-04 08:02,,2007-01-27 00:00,2007-01-27 00:00,,,2005-12-06 08:00,2005-12-08 17:00,,,,,PT_Normal,,,,,FfRl3qb6SmmixkmHjapEAw,,,,N,0,0,,,2007-02-01 02:42,2007-02-04 01:05,hbe4678,hbe4678,,,0
2932,12459113,14517,6816088,13330,1,100,N,N,N,CP_Units,TT_Task,DT_FixedDUR2,RV_OK,TK_Complete,PK000MC61G,Issue MC610 RFQ,,,,0,,0,,40,,,0,,2005-03-21 08:00,2005-03-28 17:00,2007-05-07 08:00,2007-05-07 08:00,,2007-01-27 00:00,2007-01-27 00:00,,,2005-03-21 08:00,2005-03-25 17:00,,,,,PT_Normal,,,,,vC+9dJyvSVq+tcVsKtGM+w,,,,N,,,,,2007-02-01 02:42,2007-02-04 01:05,hbe4678,hbe4678,,,0
2933,12459114,14517,6816088,13330,1,100,N,N,N,CP_Units,TT_Task,DT_FixedDUR2,RV_OK,TK_Complete,PK000MBP4P,Issue Formal P.O. for 101-B Cast Material,,,,0,0,0,0,24,0,0,0,,2005-09-09 00:00,2005-10-21 00:00,2007-11-05 08:01,2007-11-05 08:01,,2007-01-27 00:00,2007-01-27 00:00,,,2005-09-27 08:00,2005-09-29 17:00,,,,,PT_Normal,,,,,hVi6KzoVQCaOPR0afahwGw,,,,N,0,0,,,2007-02-01 02:42,2007-02-04 01:05,hbe4678,hbe4678,,,0
2934,12459115,14517,6816088,13330,1,100,N,N,N,CP_Units,TT_Task,DT_FixedDUR2,RV_OK,TK_Complete,PK000MBP4Q,MB312 - Fab/PO Promise 101-B Radiant Cast Stringer Grids,,,,0,0,0,0,1760,0,0,0,,2005-10-12 00:00,2006-07-31 17:00,2007-11-05 08:01,2007-11-05 08:01,,2007-01-27 00:00,2007-01-27 00:00,,,2005-10-17 08:00,2006-08-22 17:00,,,,,PT_Normal,,,,,LziLoBpdT1yJenEDQ21uNw,,,,N,0,0,,,2007-02-01 02:42,2007-02-04 01:05,hbe4678,hbe4678,,,0
2935,12459116,14517,6816088,13330,1,100,N,N,N,CP_Units,TT_Task,DT_FixedDUR2,RV_OK,TK_Complete,PK000MBP4R,MB312 - Fab/PO Promise 101-B Radiant Cast Tube/Riser/Manifold,,,,0,0,0,0,1760,0,0,0,,2005-10-12 00:00,2006-06-30 00:00,2007-11-05 08:01,2007-11-05 08:01,,2007-01-27 00:00,2007-01-27 00:00,,,2005-10-17 08:00,2006-08-22 17:00,,,,,PT_Normal,,,,,77/iP0G2QIi4RjnDjqPGZw,,,,N,0,0,,,2007-02-01 02:42,2007-02-04 01:05,hbe4678,hbe4678,,,0
2936,12459117,14517,6816088,13330,1,100,N,N,N,CP_Units,TT_Task,DT_FixedDUR2,RV_OK,TK_Complete,PK000MBP4S,MB312 - Transport/Customes 101-B Radiant Cast Tube/Riser/Manifold,,,,0,0,0,0,160,0,0,0,,2006-07-03 00:00,2006-07-21 00:00,2007-11-05 08:01,2007-11-05 08:01,,2007-01-27 00:00,2007-01-27 00:00,,,2006-07-31 08:00,2006-08-25 17:00,,,,,PT_Normal,,,,,wbb8/luOQBK0NJ9iTdB8mw,,,,N,0,0,,,2007-02-01 02:42,2007-02-04 01:05,hbe4678,hbe4678,,,0
2937,12459118,14517,6816088,13330,1,100,N,N,N,CP_Units,TT_Task,DT_FixedDUR2,RV_OK,TK_Complete,PK000MBP4T,MB312 - Shop Recv. 101-B Radiant Cast Stringer Grids,,,,0,0,0,0,80,0,0,0,,2006-07-24 00:00,2006-07-28 00:00,2007-11-05 08:01,2007-11-05 08:01,,2007-01-27 00:00,2007-01-27 00:00,,,2006-08-15 08:00,2006-08-28 17:00,,,,,PT_Normal,,,,,WbXE4ttvR/OubSEF27C3SQ,,,,N,0,0,,,2007-02-01 02:42,2007-02-04 01:05,hbe4678,hbe4678,,,0
2938,12459119,14517,6816088,13330,1,100,N,N,N,CP_Units,TT_Task,DT_FixedDUR2,RV_OK,TK_Complete,PK000MBP4Z,MB312 - Shop Recv. 101-B Radiant Cast Fittings,,,,0,0,0,0,80,0,0,0,,2005-10-18 00:00,2006-04-03 00:00,2007-11-05 08:01,2007-11-05 08:01,,2007-01-27 00:00,2007-01-27 00:00,,,2006-03-27 08:00,2006-04-07 17:00,,,,,PT_Normal,,,,,lMT0d332SLWVcLQnMLFN6A,,,,N,0,0,,,2007-02-01 02:42,2007-02-04 01:05,hbe4678,hbe4678,,,0
2939,12459120,14517,6816088,13330,1,100,N,N,N,CP_Units,TT_Task,DT_FixedDUR2,RV_OK,TK_Complete,PK000MC21G,Issue MC210 RFQ,,,,0,,0,,24,,,0,,2005-03-30 08:00,2005-03-30 17:00,2007-03-20 08:01,2007-03-20 08:01,,2007-01-27 00:00,2007-01-27 00:00,,,2005-03-30 08:00,2005-04-01 17:00,,,,,PT_Normal,,,,,84umjYseT3iK/EmdPckWwg,,,,N,,,,,2007-02-01 02:42,2007-02-04 01:05,hbe4678,hbe4678,,,0
2940,12459121,14517,6816088,13330,1,100,N,N,N,CP_Units,TT_Task,DT_FixedDUR2,RV_OK,TK_Complete,PK000MC21H,Receive Quotes for MC210,,,,0,0,0,,120,,0,0,,2005-03-31 08:00,2005-04-25 17:00,2007-03-20 08:01,2007-03-20 08:01,,2007-01-27 00:00,2007-01-27 00:00,,,2005-03-31 08:00,2005-04-20 17:00,,,,,PT_Normal,,,,,TK/OyL2MSsWXuU9QNg9Yyg,,,,N,0,0,,,2007-02-01 02:42,2007-02-04 01:05,hbe4678,hbe4678,,,0
2941,12459122,14517,6816088,13330,1,100,N,N,N,CP_Units,TT_Task,DT_FixedDUR2,RV_OK,TK_Complete,PK000MC21I,Eval Bids & Issue Recmd MC210,,,,0,0,0,0,40,0,0,0,,2005-05-24 08:00,2005-06-24 00:00,2007-03-20 08:01,2007-03-20 08:01,,2007-01-27 00:00,2007-01-27 00:00,,,2005-05-24 08:00,2005-05-31 17:00,,,,,PT_Normal,,,,,CvsDYMDZQcCkjmCFOjMf4w,,,,N,0,0,,,2007-02-01 02:42,2007-02-04 01:05,hbe4678,hbe4678,,,0
2942,12459123,14517,6816088,13330,1,100,N,N,N,CP_Units,TT_Task,DT_FixedDUR2,RV_OK,TK_Complete,PK000MC21J,Final Negotiate/Interim Award - MC210,,,,0,0,0,0,183.983333,0,0,0,,2005-11-01 00:00,2005-11-09 00:00,2007-03-20 08:01,2007-03-20 08:01,,2007-01-27 00:00,2007-01-27 00:00,,,2005-11-14 08:00,2005-12-14 16:59,,,,,PT_Normal,,,,,1bl7wFD9RhqNqeZmgomLLA,,,,N,0,0,,,2007-02-01 02:42,2007-02-04 01:05,hbe4678,hbe4678,,,0
2943,12459124,14517,6816088,13330,1,100,N,N,N,CP_Units,TT_Task,DT_FixedDUR2,RV_OK,TK_Complete,PK000MC21K,MC210 - Fabricate/PO Promise 110/115/124/128/130/133/134/160/167/173/174-C,,,,0,0,0,0,1600,0,0,0,,2005-11-09 00:00,2006-09-28 00:00,2007-07-02 08:01,2007-07-02 08:01,,2007-01-27 00:00,2007-01-27 00:00,,,2005-10-31 08:00,2006-08-08 17:00,,,,,PT_Normal,,,,,Fbhf2nd6RvKGzs1I+B/JAQ,,,,N,0,0,,,2007-02-01 02:42,2007-02-04 01:05,hbe4678,hbe4678,,,0
2944,12459125,14517,6816088,13330,1,100,N,N,N,CP_Units,TT_Task,DT_FixedDUR2,RV_OK,TK_Complete,PK000MC21M,Requote/Bid Condition/Final Tab - MC210,,,,0,0,0,0,160,0,0,0,,2005-07-22 00:00,2005-10-28 00:00,2007-03-20 08:01,2007-03-20 08:01,,2007-01-27 00:00,2007-01-27 00:00,,,2005-06-27 08:00,2005-07-26 17:00,,,,,PT_Normal,,,,,fnxFRN7LQYi35y1itztdxQ,,,,N,0,0,,,2007-02-01 02:42,2007-02-04 01:05,hbe4678,hbe4678,,,0
2945,12459126,14517,6816088,13330,1,100,N,N,N,CP_Units,TT_Task,DT_FixedDUR2,RV_OK,TK_Complete,PK000MC21O,MC210 - Transport/Customes 110/115/124/128/130/133/134/160/167/173/174-C,,,,0,0,0,0,240,0,0,0,2006-11-10 00:00,2006-11-13 08:00,2006-12-08 00:00,2007-07-02 08:01,2007-07-02 08:01,,2007-01-27 00:00,2007-01-27 00:00,,,2006-11-13 08:00,2006-12-22 17:00,,,,CS_MSOA,PT_Normal,,,,,pw58qw/8QY2SlnTqXpgBFQ,,,,N,0,0,,,2007-02-01 02:42,2007-02-04 01:05,hbe4678,hbe4678,,,0
2946,12459127,14517,6816088,13330,1,100,N,N,N,CP_Units,TT_Task,DT_FixedDUR2,RV_OK,TK_Complete,PK000MC21P,Issue Formal P.O. for  MC210,,,,0,0,0,0,80,0,0,0,,2005-11-09 00:00,2006-01-04 00:00,2007-07-02 08:01,2007-07-02 08:01,,2007-01-27 00:00,2007-01-27 00:00,,,2005-11-23 08:00,2005-12-06 17:00,,,,,PT_Normal,,,,,HP7XB+t9QWmdmlAsVDPNvA,,,,N,0,0,,,2007-02-01 02:42,2007-02-04 01:05,hbe4678,hbe4678,,,0
2947,12459128,14517,6816088,13330,1,100,N,N,N,CP_Units,TT_Task,DT_FixedDUR2,RV_OK,TK_Complete,PK000MC23G,Issue MC230 RFQ,,,,0,,0,,24,,,0,,2005-03-30 08:00,2005-03-30 17:00,2007-01-09 08:01,2007-01-09 08:01,,2007-01-27 00:00,2007-01-27 00:00,,,2005-03-30 08:00,2005-04-01 17:00,,,,,PT_Normal,,,,,r1OW5mXGQqeyoUCJpWoc0A,,,,N,,,,,2007-02-01 02:42,2007-02-04 01:05,hbe4678,hbe4678,,,0
2948,12459129,14517,6816088,13330,1,100,N,N,N,CP_Units,TT_Task,DT_FixedDUR2,RV_OK,TK_Complete,PK000MD32H,Receive Quotes MD302,,,,0,0,0,,120,,0,0,,2005-03-25 08:00,2005-05-02 00:00,2007-05-07 08:00,2007-05-07 08:00,,2007-01-27 00:00,2007-01-27 00:00,,,2005-03-25 08:00,2005-04-14 17:00,,,,,PT_Normal,,,,,VXrNzeuMRbmH67BwdMKEpQ,,,,N,0,0,,,2007-02-01 02:42,2007-02-04 01:05,hbe4678,hbe4678,,,0
2949,12459130,14517,6816088,13330,1,100,N,N,N,CP_Units,TT_Task,DT_FixedDUR2,RV_OK,TK_Complete,PK000MC61H,Receive Quotes MC610,,,,0,,0,,120,,,0,,2005-03-29 08:00,2005-04-15 17:00,2007-05-07 08:00,2007-05-07 08:00,,2007-01-27 00:00,2007-01-27 00:00,,,2005-03-29 08:00,2005-04-18 17:00,,,,,PT_Normal,,,,,10ZdDNZURsq7PxxaGxRcNA,,,,N,,,,,2007-02-01 02:42,2007-02-04 01:05,hbe4678,hbe4678,,,0
2950,12459131,14517,6816088,13330,1,100,N,N,N,CP_Units,TT_Task,DT_FixedDUR2,RV_OK,TK_Complete,PK000MC61I,Eval Bids & Issue Recmd MC610,,,,0,0,0,0,40,0,0,0,,2005-05-03 08:00,2005-05-06 00:00,2007-05-07 08:00,2007-05-07 08:00,,2007-01-27 00:00,2007-01-27 00:00,,,2005-05-03 08:00,2005-05-09 17:00,,,,,PT_Normal,,,,,/9IeeIFyTRWERwNcxg8eaA,,,,N,0,0,,,2007-02-01 02:42,2007-02-04 01:05,hbe4678,hbe4678,,,0
2951,12459132,14517,6816088,13330,1,100,N,N,N,CP_Units,TT_Task,DT_FixedDUR2,RV_OK,TK_Complete,PK000MC61J,Final Negotiate/Interim Award - MC610,,,,0,0,0,0,24,0,0,0,,2005-10-06 00:00,2005-10-10 00:00,2007-05-07 08:00,2007-05-07 08:00,,2007-01-27 00:00,2007-01-27 00:00,,,2005-10-24 08:00,2005-10-26 17:00,,,,,PT_Normal,,,,,/MbF5PQlRyiV9Vhwe9EgUw,,,,N,0,0,,,2007-02-01 02:42,2007-02-04 01:05,hbe4678,hbe4678,,,0
2952,12459133,14517,6816088,13330,1,100,N,N,N,CP_Units,TT_Task,DT_FixedDUR2,RV_OK,TK_Complete,PK000MC61K,MC610 - Fabricate/PO Promise DBL PIPE EXCH 188-CA,,,,0,0,0,0,1360,0,0,0,,2005-10-11 00:00,2006-07-31 00:00,2007-10-20 08:01,2007-10-20 08:01,,2007-01-27 00:00,2007-01-27 00:00,,,2005-10-27 08:00,2006-06-23 17:00,,,,,PT_Normal,,,,,PSjEqzfWRwOWJguN5wR3cg,,,,N,0,0,,,2007-02-01 02:42,2007-02-04 01:05,hbe4678,hbe4678,,,0
2953,12459134,14517,6816088,13330,1,100,N,N,N,CP_Units,TT_Task,DT_FixedDUR2,RV_OK,TK_Complete,PK000MC61M,Requote/Bid Condition/Final Tab - MC610,,,,0,0,0,0,160,0,0,0,,2005-05-09 00:00,2005-10-05 00:00,2007-05-07 08:00,2007-05-07 08:00,,2007-01-27 00:00,2007-01-27 00:00,,,2005-05-23 08:00,2005-06-20 17:00,,,,,PT_Normal,,,,,XGx9B7gKQHG79M9TkobqVQ,,,,N,0,0,,,2007-02-01 02:42,2007-02-04 01:05,hbe4678,hbe4678,,,0
2954,12459135,14517,6816088,13330,1,100,N,N,N,CP_Units,TT_Task,DT_FixedDUR2,RV_OK,TK_Complete,PK000MC61O,MC610 - Transport/Customes DBL PIPE EXCH 188-CA,,,,0,0,0,0,240,0,0,0,,2006-08-16 00:00,2006-09-14 00:00,2007-10-20 08:01,2007-10-20 08:01,,2007-01-27 00:00,2007-01-27 00:00,,,2006-09-26 08:00,2006-11-06 17:00,,,,,PT_Normal,,,,,8EJVcd2mSxSJhDyF9HjVmg,,,,N,0,0,,,2007-02-01 02:42,2007-02-04 01:05,hbe4678,hbe4678,,,0
2955,12459136,14517,6816088,13330,1,100,N,N,N,CP_Units,TT_Task,DT_FixedDUR2,RV_OK,TK_Complete,PK000MC61P,Issue Formal P.O. for  MC610,,,,0,0,0,0,80,0,0,0,,2005-10-11 00:00,2005-11-11 17:00,2007-10-20 08:01,2007-10-20 08:01,,2007-01-27 00:00,2007-01-27 00:00,,,2005-10-17 08:00,2005-10-28 17:00,,,,,PT_Normal,,,,,YGf43re9T7qEM0mcR0BcKA,,,,N,0,0,,,2007-02-01 02:42,2007-02-04 01:05,hbe4678,hbe4678,,,0
2956,12459137,14517,6816088,13330,1,100,N,N,N,CP_Units,TT_Task,DT_FixedDUR2,RV_OK,TK_Complete,PK000MD21G,Issue MD201 RFQ,,,,0,0,0,0,24,0,0,0,,2005-07-18 00:00,2005-07-20 17:00,2007-01-09 08:01,2007-01-09 08:01,,2007-01-27 00:00,2007-01-27 00:00,,,2005-07-12 08:00,2005-07-14 17:00,,,,,PT_Normal,,,,,Xiwe30lSQhuj4GJSj+E0lw,,,,N,0,0,,,2007-02-01 02:42,2007-02-04 01:05,hbe4678,hbe4678,,,0
2957,12459138,14517,6816088,13330,1,100,N,N,N,CP_Units,TT_Task,DT_FixedDUR2,RV_OK,TK_Complete,PK000MD21H,Receive Quotes for MD201,,,,0,0,0,0,120,0,0,0,,2005-07-25 00:00,2005-08-10 17:00,2007-01-09 08:01,2007-01-09 08:01,,2007-01-27 00:00,2007-01-27 00:00,,,2005-07-15 08:00,2005-08-04 17:00,,,,,PT_Normal,,,,,oJJxIew5TKWd5yn1MIKozg,,,,N,0,0,,,2007-02-01 02:42,2007-02-04 01:05,hbe4678,hbe4678,,,0
2958,12459139,14517,6816088,13330,1,100,N,N,N,CP_Units,TT_Task,DT_FixedDUR2,RV_OK,TK_Complete,PK000MD21I,Eval Bids & Issue Recmd MD201,,,,0,0,0,0,136,0,0,0,,2005-08-15 00:00,2005-09-16 17:00,2007-01-09 08:01,2007-01-09 08:01,,2007-01-27 00:00,2007-01-27 00:00,,,2005-09-12 08:00,2005-10-04 17:00,,,,,PT_Normal,,,,,ISPCguilTHKCpAD2iL7XPg,,,,N,0,0,,,2007-02-01 02:42,2007-02-04 01:05,hbe4678,hbe4678,,,0
2959,12459140,14517,6816088,13330,1,100,N,N,N,CP_Units,TT_Task,DT_FixedDUR2,RV_OK,TK_Complete,PK000MD21J,Final Negotiate/Interim Award - MD201,,,,0,0,0,0,24,0,0,0,,2005-09-09 00:00,2005-10-03 00:00,2007-01-09 08:01,2007-01-09 08:01,,2007-01-27 00:00,2007-01-27 00:00,,,2005-09-29 08:00,2005-10-03 17:00,,,,,PT_Normal,,,,,W2w3/uKhQMeCKkbm4t/ygA,,,,N,0,0,,,2007-02-01 02:42,2007-02-04 01:05,hbe4678,hbe4678,,,0
2960,12459141,14517,6816088,13330,1,0,N,N,N,CP_Units,TT_Task,DT_FixedDUR2,RV_OK,TK_Active,PK000MD21K,MD201 - Fabricate/PO Promise 101-E,,744.016666666667,0,24,0,0,0,3160,0,0,0,,2005-10-17 08:00,,2007-06-07 08:01,2007-06-12 08:01,2007-01-31 17:00,2007-01-29 08:00,2007-01-31 17:00,2007-01-29 08:00,2007-01-31 17:00,2005-10-17 08:00,2007-04-24 17:00,,2007-06-07 08:01,2007-06-12 08:01,,PT_Normal,,,,,R2cfutvZTqaQGLaqe3hj2w,,,,N,0,0,,,2007-02-01 02:42,2007-02-04 01:00,hbe4678,hbe4678,2007-01-29 08:00,2007-01-31 17:00,24
2961,12459142,14517,6816088,13330,1,100,N,N,N,CP_Units,TT_Task,DT_FixedDUR2,RV_OK,TK_Complete,PK000MC23O,MC230 - Transport/Customes 105/172/183-C,,,,0,0,0,0,240,0,0,0,,2006-11-13 08:00,2006-12-08 00:00,2007-07-02 08:01,2007-07-02 08:01,,2007-01-27 00:00,2007-01-27 00:00,,,2006-11-13 08:00,2006-12-22 17:00,,,,,PT_Normal,,,,,UjcttpUtTC+2u/oLueKMZw,,,,N,0,0,,,2007-02-01 02:42,2007-02-04 01:05,hbe4678,hbe4678,,,0
2962,12459143,14517,6816088,13330,1,100,N,N,N,CP_Units,TT_Task,DT_FixedDUR2,RV_OK,TK_Complete,PK000MC23P,Issue Formal P.O. for  MC230,,,,0,0,0,0,80,0,0,0,,2005-11-09 00:00,2005-12-09 17:00,2007-06-13 08:01,2007-06-13 08:01,,2007-01-27 00:00,2007-01-27 00:00,,,2005-11-14 08:00,2005-11-25 17:00,,,,,PT_Normal,,,,,l9PKTd9gRdCaVmy8UJ3/lQ,,,,N,0,0,,,2007-02-01 02:42,2007-02-04 01:05,hbe4678,hbe4678,,,0
2963,12459144,14517,6816088,13330,1,100,N,N,N,CP_Units,TT_Task,DT_FixedDUR2,RV_OK,TK_Complete,PK000MC31G,Issue MC310 RFQ,,,,0,,0,,40,,,0,,2005-03-21 08:00,2005-03-28 17:00,2007-02-08 08:01,2007-02-08 08:01,,2007-01-27 00:00,2007-01-27 00:00,,,2005-03-21 08:00,2005-03-25 17:00,,,,,PT_Normal,,,,,iNznVzs5Tt62aLXZteKvuw,,,,N,,,,,2007-02-01 02:42,2007-02-04 01:05,hbe4678,hbe4678,,,0
2964,12459145,14517,6816088,13330,1,100,N,N,N,CP_Units,TT_Task,DT_FixedDUR2,RV_OK,TK_Complete,PK000MC31H,Receive Quotes for MC310,,,,0,0,0,,120,,0,0,,2005-03-29 08:00,2005-06-03 17:00,2007-02-08 08:01,2007-02-08 08:01,,2007-01-27 00:00,2007-01-27 00:00,,,2005-03-29 08:00,2005-04-18 17:00,,,,,PT_Normal,,,,,GsQZb0fhSb2lmfs6QrOL+g,,,,N,0,0,,,2007-02-01 02:42,2007-02-04 01:05,hbe4678,hbe4678,,,0
2965,12459146,14517,6816088,13330,1,100,N,N,N,CP_Units,TT_Task,DT_FixedDUR2,RV_OK,TK_Complete,PK000MC31I,Eval Bids & Issue Recmd MC310,,,,0,0,0,0,160,0,0,0,,2005-08-12 08:00,2006-01-20 00:00,2007-02-08 08:01,2007-02-08 08:01,,2007-01-27 00:00,2007-01-27 00:00,,,2005-08-12 08:00,2005-09-08 17:00,,,,,PT_Normal,,,,,Ebh4/aVrTKiPS5P/pkT7Eg,,,,N,0,0,,,2007-02-01 02:42,2007-02-04 01:05,hbe4678,hbe4678,,,0
2966,12459147,14517,6816088,13330,1,100,N,N,N,CP_Units,TT_Task,DT_FixedDUR2,RV_OK,TK_Complete,PK000MC31J,Final Negotiate/Interim Award - MC310,,,,0,0,0,0,80,0,0,0,,2006-01-20 00:00,2006-02-03 00:00,2007-02-08 08:01,2007-02-08 08:01,,2007-01-27 00:00,2007-01-27 00:00,,,2006-02-06 08:00,2006-02-17 17:00,,,,,PT_Normal,,,,,zLvJ/PSoTHaL8CpwGEqsVw,,,,N,0,0,,,2007-02-01 02:42,2007-02-04 01:05,hbe4678,hbe4678,,,0
2967,12459148,14517,6816088,13330,1,0,N,N,N,CP_Units,TT_Task,DT_FixedDUR2,RV_OK,TK_Active,PK000MC31K,MC310 - Fabricate/PO Promise 101-C & 102-C (Heavy Lift),,64.0166666666667,0,1048,0,0,0,2560,0,0,0,,2006-02-03 00:00,,2007-02-08 08:01,2007-08-10 08:01,2007-07-30 17:00,2007-01-29 08:00,2007-07-30 17:00,2007-01-29 08:00,2007-07-30 17:00,2006-02-20 08:00,2007-05-11 17:00,,2007-02-08 08:01,2007-08-10 08:01,,PT_Normal,,,,,63z8nvu8RuWEUNtQAFnZ+g,,,,N,0,0,,,2007-02-01 02:42,2007-02-04 01:00,hbe4678,hbe4678,2007-01-29 08:00,2007-07-30 17:00,1048
2968,12459149,14517,6816088,13330,1,0,N,N,N,CP_Units,TT_Task,DT_FixedDUR2,RV_OK,TK_NotStart,PK000MC31O,MC310 - Transport/Customes 101-C & 102-C (Heavy Lift),,64.0166666666667,0,160,0,0,0,240,0,0,0,,,,2007-08-13 08:01,2007-09-10 08:01,,2007-08-01 08:00,2007-08-28 17:00,2007-08-01 08:00,2007-08-28 17:00,2007-08-01 08:00,2007-09-11 17:00,,2007-08-13 08:01,2007-09-10 08:01,,PT_Normal,,,,,5R+qXacsQP2Yu/So8mrqhg,,,,N,0,0,,,2007-02-01 02:42,2007-02-04 01:00,hbe4678,hbe4678,2007-08-01 08:00,2007-08-28 17:00,160
2969,12459150,14517,6816088,13330,1,100,N,N,N,CP_Units,TT_Task,DT_FixedDUR2,RV_OK,TK_Complete,PK000MD32G,Issue MD302 RFQ,,,,0,,0,,40,,,0,,2005-03-21 08:00,2005-03-24 17:00,2007-05-07 08:00,2007-05-07 08:00,,2007-01-27 00:00,2007-01-27 00:00,,,2005-03-21 08:00,2005-03-25 17:00,,,,,PT_Normal,,,,,FjvtVQNdTEC1fYcGJpNwgA,,,,N,,,,,2007-02-01 02:42,2007-02-04 01:05,hbe4678,hbe4678,,,0
2970,12459151,14517,6816088,13330,1,100,N,N,N,CP_Units,TT_Task,DT_FixedDUR2,RV_OK,TK_Complete,PK000MC31P,Issue Formal P.O. for  MC310,,,,0,0,0,0,24,0,0,0,,2006-02-03 00:00,2006-03-22 00:00,2007-08-10 08:01,2007-08-10 08:01,,2007-01-27 00:00,2007-01-27 00:00,,,2006-03-06 08:00,2006-03-08 17:00,,,,,PT_Normal,,,,,uq2FNcIeTOqVF5UJsKm6IQ,,,,N,0,0,,,2007-02-01 02:42,2007-02-04 01:05,hbe4678,hbe4678,,,0
2971,12459152,14517,6816088,13330,1,100,N,N,N,CP_Units,TT_Task,DT_FixedDUR2,RV_OK,TK_Complete,PK000MD21P,Issue Formal P.O. for  MD201,,,,0,0,0,0,80,0,0,0,,2005-10-03 08:00,2005-10-19 00:00,2007-01-09 08:01,2007-01-09 08:01,,2007-01-27 00:00,2007-01-27 00:00,,,2005-10-03 08:00,2005-10-14 17:00,,,,,PT_Normal,,,,,r4rJjXKmSWy6nG2j2dohmw,,,,N,0,0,,,2007-02-01 02:42,2007-02-04 01:05,hbe4678,hbe4678,,,0
2972,12459153,14517,6816088,13330,1,100,N,N,N,CP_Units,TT_Task,DT_FixedDUR2,RV_OK,TK_Complete,PK000MD22G,Issue MD202 RFQ,,,,0,,0,,24,,,0,,2005-03-31 08:00,2005-03-31 17:00,2007-05-07 08:00,2007-05-07 08:00,,2007-01-27 00:00,2007-01-27 00:00,,,2005-03-31 08:00,2005-04-04 17:00,,,,,PT_Normal,,,,,cGq8YyeZREqVupTkSl2Ykg,,,,N,,,,,2007-02-01 02:42,2007-02-04 01:05,hbe4678,hbe4678,,,0
2973,12459154,14517,6816088,13330,1,0,N,N,N,CP_Units,TT_Task,DT_FixedDUR2,RV_OK,TK_NotStart,PK000md113,MD305 Merc. Removal Bed 102-D - Marshaling,,1256.01666666667,0,40,0,0,0,80,0,0,0,,,,2007-11-07 08:01,2007-11-14 08:01,,2007-04-02 08:00,2007-04-06 17:00,2007-04-02 08:00,2007-04-06 17:00,2007-04-02 08:00,2007-04-13 17:00,,2007-11-07 08:01,2007-11-14 08:01,,PT_Normal,,,,,Toc90JmsSmOL6LiMLbKGWw,rubIj2FRQT+oaidyaoNEVw,,,N,0,0,,,2007-02-01 02:42,2007-02-04 01:00,hbe4678,hbe4678,2007-04-02 08:00,2007-04-06 17:00,40
2974,12459155,14517,6816089,13329,0,0,N,N,N,CP_Units,TT_FinMile,DT_FixedDUR2,RV_OK,TK_NotStart,PK010IC272,MOV Valves - Recv on Site,,4376,144,0,0,0,0,0,0,0,0,,,,2009-02-15 08:01,2009-02-15 08:01,,2007-04-21 08:01,2007-04-21 08:01,2007-04-21 08:01,2007-04-21 08:01,2007-04-21 08:01,2007-04-21 08:01,,2009-02-15 08:01,2009-02-15 08:01,,PT_Normal,,,,,zodcL9lPQFO4Iouw0+blhg,4sQ9RUFsokG6zkStLw+XTh,,,N,0,0,,,2007-02-01 02:42,2007-02-04 01:00,hbe4678,hbe4678,2007-04-21 08:01,2007-04-21 08:01,0
2975,12459156,14517,6816089,13329,0,0,N,N,N,CP_Units,TT_Mile,DT_FixedDrtn,RV_OK,TK_NotStart,PK030I611L,Recv at Site - Pressure Gauges - OSBL,,560,400,0,0,0,0,0,0,0,0,,,,2007-07-09 08:00,2007-07-09 08:00,,2007-04-18 08:00,2007-04-18 08:00,2007-04-18 08:00,2007-04-18 08:00,2007-04-18 08:00,2007-04-18 08:00,,2007-07-09 08:00,2007-07-09 08:00,,PT_Normal,,,,,kPU/oQtRSX+mkLP3Wz8l3Q,Lh+jyV/ZWUmS/MGgkRI1vR,,,N,0,0,,,2007-02-01 02:42,2007-02-01 02:43,hbe4678,hbe4678,2007-04-18 08:00,2007-04-18 08:00,0
2976,12459157,14517,6816089,4047,0,0,N,N,N,CP_Drtn,TT_FinMile,DT_FixedDrtn,RV_OK,TK_NotStart,PK03FMU32Z,MU322 Recv. at Site - COOLING WTR FILTER & CLARIFIER,,568.016666666667,344,0,0,0,0,0,0,0,0,,,,2007-07-10 08:01,2007-07-10 08:01,,2007-03-30 17:00,2007-03-30 17:00,2007-03-30 17:00,2007-03-30 17:00,2007-03-30 17:00,2007-03-30 17:00,,2007-07-10 08:01,2007-07-10 08:01,,PT_Normal,,,,,y+o0MEQ2T6+/NJ5IWzv3yg,,,,N,0,0,,,2007-02-01 02:42,2007-02-04 01:00,hbe4678,hbe4678,2007-03-30 17:00,2007-03-30 17:00,0
2977,12459158,14517,6816089,13329,0,100,N,N,N,CP_Units,TT_FinMile,DT_FixedDUR2,RV_OK,TK_Complete,ZZ1020,01D Recv. at Site - 2101-UJA Thru UJGM CW Motors,,,,0,0,0,0,0,0,0,0,,2006-07-24 08:01,2006-07-24 08:01,2007-04-08 08:01,2007-04-08 08:01,,2007-01-27 00:00,2007-01-27 00:00,,,2006-07-24 08:01,2006-07-24 08:01,,,,,PT_Normal,,,,,Zrb5+AajSeKoBmsF1hLOqg,k5jMas+QF060b06mOv6gUx,,,N,0,0,,,2007-02-01 02:42,2007-02-04 01:05,hbe4678,hbe4678,,,0
2978,12459159,14517,6816089,13329,0,100,N,N,N,CP_Units,TT_FinMile,DT_FixedDUR2,RV_OK,TK_Complete,PK01DMU61Z,"01D Recv. at Site - 2101-U, 2101-UJA Thru UJG CW TWR & Fans",,,,0,0,0,0,0,0,0,0,,2006-07-24 08:01,2006-07-24 08:01,2007-04-08 08:01,2007-04-08 08:01,,2007-01-27 00:00,2007-01-27 00:00,,,2006-07-24 08:01,2006-07-24 08:01,,,,,PT_Normal,,,,,4XLtFMX8QheJgrXeohP2FA,,,,N,0,0,,,2007-02-01 02:42,2007-02-04 01:05,hbe4678,hbe4678,,,0
2979,12459160,14517,6816089,13329,0,100,N,N,N,CP_Units,TT_FinMile,DT_FixedDrtn,RV_OK,TK_Complete,PK01FMU21Z,01E Recv. at Site - 2402-L Lift Station,,,,0,0,0,0,0,0,0,0,,2007-01-12 00:00,2007-01-12 00:00,2007-07-08 17:00,2007-07-08 17:00,,2007-01-27 00:00,2007-01-27 00:00,,,2007-01-30 17:00,2007-01-30 17:00,,,,,PT_Normal,,,,,msOvOeXERJ+HUOyV0tK5hA,,,,N,0,0,,,2007-02-01 02:42,2007-02-04 01:05,hbe4678,hbe4678,,,0
2980,12459161,14517,6816089,13329,0,100,N,N,N,CP_Units,TT_FinMile,DT_FixedDrtn,RV_OK,TK_Complete,PK01GMU21Z,01E Recv. at Site - Lift Station,,,,0,0,0,0,0,0,0,0,,2006-12-12 00:00,2006-12-12 00:00,2007-07-08 17:00,2007-07-08 17:00,,2007-01-27 00:00,2007-01-27 00:00,,,2007-01-06 08:01,2007-01-06 08:01,,,,,PT_Normal,,,,,3uVyCzNQRsulrs8x0/BIUQ,,,,N,0,0,,,2007-02-01 02:42,2007-02-04 01:05,hbe4678,hbe4678,,,0
2981,12459162,14517,6816089,13329,0,0,N,N,N,CP_Units,TT_FinMile,DT_FixedDUR2,RV_OK,TK_NotStart,PK01HMJ73Z,01H Recv. at Site - 2303-J Emerg Power Generator,,688,0,0,0,0,0,0,0,0,0,,,,2007-08-27 08:01,2007-08-27 08:01,,2007-05-19 08:01,2007-05-19 08:01,2007-05-19 08:01,2007-05-19 08:01,2007-05-19 08:01,2007-05-19 08:01,,2007-08-27 08:01,2007-08-27 08:01,,PT_Normal,,,,,kA2gfI42QhCcxS5p1/73Aw,,,,N,0,0,,,2007-02-01 02:42,2007-02-04 01:00,hbe4678,hbe4678,2007-05-19 08:01,2007-05-19 08:01,0
2982,12459163,14517,6816089,13329,0,0,N,N,N,CP_Units,TT_FinMile,DT_FixedDUR2,RV_OK,TK_NotStart,PK01HE001L,Sub Stations - Receive at Site,,608,0,0,0,0,0,0,0,0,0,,,,2007-08-08 08:01,2007-08-08 08:01,,2007-05-12 08:01,2007-05-12 08:01,2007-05-12 08:01,2007-05-12 08:01,2007-05-12 08:01,2007-05-12 08:01,,2007-08-08 08:01,2007-08-08 08:01,,PT_Normal,,,,,HZ4cq6sHRKSikovzr+pnUQ,,,,N,0,0,,,2007-02-01 02:42,2007-02-04 01:00,hbe4678,hbe4678,2007-05-12 08:01,2007-05-12 08:01,0
2983,12459164,14517,6816089,13329,0,0,N,N,N,CP_Units,TT_FinMile,DT_FixedDUR2,RV_OK,TK_NotStart,PK01HE002L,Transformer - Receive at Site,,272.016666666667,8,0,0,0,0,0,0,0,0,,,,2007-07-23 08:01,2007-07-23 08:01,,2007-06-12 17:00,2007-06-12 17:00,2007-06-12 17:00,2007-06-12 17:00,2007-06-12 17:00,2007-06-12 17:00,,2007-07-23 08:01,2007-07-23 08:01,,PT_Normal,,,,,61pZDWIDRDupYf/WOSZ3BA,,,,N,0,0,,,2007-02-01 02:42,2007-02-04 01:00,hbe4678,hbe4678,2007-06-12 17:00,2007-06-12 17:00,0
2984,12459165,14517,6816089,13329,0,0,N,N,N,CP_Units,TT_FinMile,DT_FixedDUR2,RV_OK,TK_NotStart,PK01GIC35L,DCS - Receive at Site,,831.983333333333,943.983333333333,0,0,0,0,0,0,0,0,,,,2007-07-08 17:00,2007-07-08 17:00,,2007-03-10 08:01,2007-03-10 08:01,2007-03-10 08:01,2007-03-10 08:01,2007-03-10 08:01,2007-03-10 08:01,,2007-07-08 17:00,2007-07-08 17:00,,PT_Normal,,,,,jvkUtRrZRYm2mivBv3uuYQ,,,,N,0,0,,,2007-02-01 02:42,2007-02-04 01:00,hbe4678,hbe4678,2007-03-10 08:01,2007-03-10 08:01,0
2985,12459166,14517,6816089,13329,0,0,N,N,N,CP_Units,TT_FinMile,DT_FixedDUR2,RV_OK,TK_NotStart,PK01BMJ33Z,01B Recv. at Site - 2007-J/JA Cooling Wtr Makeup Pumps,,256,0,0,0,0,0,0,0,0,0,,,,2007-07-07 17:00,2007-07-07 17:00,,2007-05-30 17:00,2007-05-30 17:00,2007-05-30 17:00,2007-05-30 17:00,2007-05-30 17:00,2007-05-30 17:00,,2007-07-07 17:00,2007-07-07 17:00,,PT_Normal,,,,,urbjcuLlTSid9gtWQvpLSQ,,,,N,0,0,,,2007-02-01 02:42,2007-02-01 02:43,hbe4678,hbe4678,2007-05-30 17:00,2007-05-30 17:00,0
2986,12459167,14517,6816089,13329,0,0,N,N,N,CP_Units,TT_FinMile,DT_FixedDUR2,RV_OK,TK_NotStart,PK01BMJ36Z,"01B Recv. at Site - 2001-JA/JB/JC, 2004-J/JA, 2007J/JA",,583.983333333333,327.983333333333,0,0,0,0,0,0,0,0,,,,2007-07-07 17:00,2007-07-07 17:00,,2007-04-14 08:01,2007-04-14 08:01,2007-04-14 08:01,2007-04-14 08:01,2007-04-14 08:01,2007-04-14 08:01,,2007-07-07 17:00,2007-07-07 17:00,,PT_Normal,,,,,KqOSwX46Rr28MsDxnblKUg,,,,N,0,0,,,2007-02-01 02:42,2007-02-04 01:00,hbe4678,hbe4678,2007-04-14 08:01,2007-04-14 08:01,0
2987,12459168,14517,6816089,13329,0,0,N,N,N,CP_Units,TT_FinMile,DT_FixedDUR2,RV_OK,TK_NotStart,PK01BMJ39Z,Recv. at Site - Firewater Pumps,,583.983333333333,327.983333333333,0,0,0,0,0,0,0,0,,,,2007-07-07 17:00,2007-07-07 17:00,,2007-04-14 08:01,2007-04-14 08:01,2007-04-14 08:01,2007-04-14 08:01,2007-04-14 08:01,2007-04-14 08:01,,2007-07-07 17:00,2007-07-07 17:00,,PT_Normal,,,,,ccBaiOFsQky4GPL4YDsXow,,,,N,0,0,,,2007-02-01 02:42,2007-02-04 01:00,hbe4678,hbe4678,2007-04-14 08:01,2007-04-14 08:01,0
2988,12459169,14517,6816089,13329,0,0,N,N,N,CP_Units,TT_FinMile,DT_FixedDUR2,RV_OK,TK_NotStart,PK01GI354L,ITCC - Receive at Site,,543.983333333333,655.983333333333,0,0,0,0,0,0,0,0,,,,2007-07-08 17:00,2007-07-08 17:00,,2007-04-21 08:01,2007-04-21 08:01,2007-04-21 08:01,2007-04-21 08:01,2007-04-21 08:01,2007-04-21 08:01,,2007-07-08 17:00,2007-07-08 17:00,,PT_Normal,,,,,unPQJ5LaSReEs4bodcJ2cg,ERrr9bpJ8UqVJ2qlI0tsBR,,,N,0,0,,,2007-02-01 02:42,2007-02-04 01:00,hbe4678,hbe4678,2007-04-21 08:01,2007-04-21 08:01,0
2989,12459170,14517,6816089,13329,0,0,N,N,N,CP_Units,TT_FinMile,DT_FixedDUR2,RV_OK,TK_NotStart,PK01GI352L,SIS - Receive at Site,,543.983333333333,655.983333333333,0,0,0,0,0,0,0,0,,,,2007-07-08 17:00,2007-07-08 17:00,,2007-04-21 08:01,2007-04-21 08:01,2007-04-21 08:01,2007-04-21 08:01,2007-04-21 08:01,2007-04-21 08:01,,2007-07-08 17:00,2007-07-08 17:00,,PT_Normal,,,,,1b3rXUn6QJK7Zu+yvAtXqQ,ERrr9bpJ8UqVJ2qlI0tsBR,,,N,0,0,,,2007-02-01 02:42,2007-02-04 01:00,hbe4678,hbe4678,2007-04-21 08:01,2007-04-21 08:01,0
2990,12459171,14517,6816089,13329,0,100,N,N,N,CP_Units,TT_FinMile,DT_FixedDUR2,RV_OK,TK_Complete,PK010I1242,Rotameters - Recv on Site,,,,0,0,0,0,0,0,0,0,,2006-08-16 00:00,2006-08-16 00:00,2009-02-15 08:01,2009-02-15 08:01,,2007-02-13 17:00,2007-02-13 17:00,,,2007-04-21 08:01,2007-04-21 08:01,,,,,PT_Normal,,,,,pNEaedFGTS+k2VGP9udmbQ,OqlCF033q0avzgSGncKzXR,,,N,0,0,,,2007-02-01 02:42,2007-02-04 01:05,hbe4678,hbe4678,,,0
2991,12459172,14517,6816089,13329,0,0,N,N,N,CP_Units,TT_Mile,DT_FixedDrtn,RV_OK,TK_NotStart,PK030I131L,Recv at Site - Transmitters -Temp.,,688,528,0,0,0,0,0,0,0,0,,,,2007-07-09 08:00,2007-07-09 08:00,,2007-03-31 08:00,2007-03-31 08:00,2007-03-31 08:00,2007-03-31 08:00,2007-03-31 08:00,2007-03-31 08:00,,2007-07-09 08:00,2007-07-09 08:00,,PT_Normal,,,,,9pVjkYDbTC+1kyujQ9u8Rg,2TLg5qNiLkOTj2N9cUjSkR,,,N,0,0,,,2007-02-01 02:42,2007-02-01 02:43,hbe4678,hbe4678,2007-03-31 08:00,2007-03-31 08:00,0
2992,12459173,14517,6816089,13329,0,100,N,N,N,CP_Units,TT_FinMile,DT_FixedDUR2,RV_OK,TK_Complete,PK010I1105,010 Orific Plates - Recv on Site,,,,0,0,0,0,0,0,0,0,,2006-12-07 00:00,2006-12-07 00:00,2009-02-15 08:01,2009-02-15 08:01,,2007-01-27 00:00,2007-01-27 00:00,,,2007-01-27 08:01,2007-01-27 08:01,,,,,PT_Normal,,,,,PhE90rIRSIyU1ojp40H9cg,jCe9doeEvEOUCJd5KqIgTx,,,N,0,0,,,2007-02-01 02:42,2007-02-04 01:05,hbe4678,hbe4678,,,0
2993,12459174,14517,6816089,13329,0,0,N,N,N,CP_Units,TT_FinMile,DT_FixedDUR2,RV_OK,TK_NotStart,PK010I1152,Annubars - Recv on Site,,4688.01666666667,456.016666666667,0,0,0,0,0,0,0,0,,,,2009-02-15 08:01,2009-02-15 08:01,,2007-03-05 17:00,2007-03-05 17:00,2007-03-05 17:00,2007-03-05 17:00,2007-03-05 17:00,2007-03-05 17:00,,2009-02-15 08:01,2009-02-15 08:01,,PT_Normal,,,,,Ls2d7N4/RACECKcohqvPog,8QOkMnESrUqAWoM5ru+FNR,,,N,0,0,,,2007-02-01 02:42,2007-02-04 01:00,hbe4678,hbe4678,2007-03-05 17:00,2007-03-05 17:00,0
2994,12459175,14517,6816089,13329,0,0,N,N,N,CP_Units,TT_FinMile,DT_FixedDUR2,RV_OK,TK_NotStart,PK010I1212,Vortex Meters - Recv on Site,,4920.01666666667,688.016666666667,0,0,0,0,0,0,0,0,,,,2009-02-15 08:01,2009-02-15 08:01,,2007-01-30 17:00,2007-01-30 17:00,2007-01-30 17:00,2007-01-30 17:00,2007-01-30 17:00,2007-01-30 17:00,,2009-02-15 08:01,2009-02-15 08:01,,PT_Normal,,,,,2FAiqGXAQ9Kk+jbB218S3g,qj8TPT9vOU6LIXaeEYdoMR,,,N,0,0,,,2007-02-01 02:42,2007-02-04 01:00,hbe4678,hbe4678,2007-01-30 17:00,2007-01-30 17:00,0
2995,12459176,14517,6816089,13329,0,100,N,N,N,CP_Units,TT_FinMile,DT_FixedDUR2,RV_OK,TK_Complete,PK010IC220,010 Control Valves - Recv on Site,,,,0,0,0,0,0,0,0,0,,2006-12-29 00:00,2006-12-29 00:00,2009-02-15 08:01,2009-02-15 08:01,,2007-01-29 08:00,2007-01-29 08:00,,,2007-01-27 08:01,2007-01-27 08:01,,,,,PT_Normal,,,,,JH0EgoJYRMOdhJXuL8iHwg,KugaZHSzg0q5RlN+Kbe3Ix,,,N,0,0,,,2007-02-01 02:42,2007-02-04 01:05,hbe4678,hbe4678,,,0
2996,12459177,14517,6816089,13329,0,0,N,N,N,CP_Units,TT_FinMile,DT_FixedDUR2,RV_OK,TK_NotStart,PK000ML90Z,01A ML900 - Recv. at Site - Evap. Pond Spray Nzl.,,999.983333333333,240,0,0,0,0,0,0,0,0,,,,2007-08-15 17:00,2007-08-15 17:00,,2007-03-24 08:01,2007-03-24 08:01,2007-03-24 08:01,2007-03-24 08:01,2007-03-24 08:01,2007-03-24 08:01,,2007-08-15 17:00,2007-08-15 17:00,,PT_Normal,,,,,vN44KgdQRSuV4/gMeTBH0A,Nzbrh89YyEabQX4InYR7FB,,,N,0,0,,,2007-02-01 02:42,2007-02-04 01:00,hbe4678,hbe4678,2007-03-24 08:01,2007-03-24 08:01,0
2997,12459178,14517,6816089,13329,0,0,N,N,N,CP_Units,TT_FinMile,DT_FixedDUR2,RV_OK,TK_NotStart,PK01BMU30Z,01C Recv. at Site - 2102-U EDR Unit,,744,0,0,0,0,0,0,0,0,0,,,,2007-07-17 08:01,2007-07-17 08:01,,2007-03-31 08:01,2007-03-31 08:01,2007-03-31 08:01,2007-03-31 08:01,2007-03-31 08:01,2007-03-31 08:01,,2007-07-17 08:01,2007-07-17 08:01,,PT_Normal,,,,,jOYNITmgTbijgbUqSCKvog,,,,N,0,0,,,2007-02-01 02:42,2007-02-04 01:00,hbe4678,hbe4678,2007-03-31 08:01,2007-03-31 08:01,0
2998,12459179,14517,6816089,13330,0,0,N,N,N,CP_Units,TT_FinMile,DT_FixedDUR2,RV_OK,TK_NotStart,PK01DMJ33Z,01D Recv. at Site - Equip. 2202-JA/B/C,,224.016666666667,0,0,0,0,0,0,0,0,0,,,,2007-07-10 08:01,2007-07-10 08:01,,2007-05-30 17:00,2007-05-30 17:00,2007-05-30 17:00,2007-05-30 17:00,2007-05-30 17:00,2007-05-30 17:00,,2007-07-10 08:01,2007-07-10 08:01,,PT_Normal,,,,,TedV6caXQLCe9TqlFOPzzQ,,,,N,0,0,,,2007-02-01 02:42,2007-02-04 01:00,hbe4678,hbe4678,2007-05-30 17:00,2007-05-30 17:00,0
2999,12459180,14517,6816090,13329,0,100,N,N,N,CP_Units,TT_FinMile,DT_FixedDUR2,RV_OK,TK_Complete,PK03CMD46Z,03C Recv. at Site - 2203-F & 2204-F Caustic Tank/ Acid Drum,,,,0,0,0,0,0,0,0,0,,2006-09-16 00:00,2006-09-16 00:00,2007-10-30 08:00,2007-10-30 08:00,,2007-01-27 00:00,2007-01-27 00:00,,,2006-09-21 08:01,2006-09-21 08:01,,,,,PT_Normal,,,,,n0GtuAW9ShegUwy4NlN7IQ,,,,N,0,0,,,2007-02-01 02:42,2007-02-04 01:05,hbe4678,hbe4678,,,0
3000,12459181,14517,6816090,13329,0,0,N,N,N,CP_Units,TT_FinMile,DT_FixedDUR2,RV_OK,TK_NotStart,PK03CMJ36Z,"03C Recv. at Site - 2205-J/JA, 2206-J/JA Pumps",,1167.98333333333,0,0,0,0,0,0,0,0,0,,,,2007-10-22 17:00,2007-10-22 17:00,,2007-04-14 08:01,2007-04-14 08:01,2007-04-14 08:01,2007-04-14 08:01,2007-04-14 08:01,2007-04-14 08:01,,2007-10-22 17:00,2007-10-22 17:00,,PT_Normal,,,,,sfw554f9RyiYcnVZRQULuw,,,,N,0,0,,,2007-02-01 02:42,2007-02-04 01:00,hbe4678,hbe4678,2007-04-14 08:01,2007-04-14 08:01,0
3001,12459182,14517,6816090,13329,0,0,N,N,N,CP_Units,TT_FinMile,DT_FixedDUR2,RV_OK,TK_NotStart,PK030I1105,Orific Plates - Recv on Site,,4736.01666666667,504.016666666667,0,0,0,0,0,0,0,0,,,,2009-02-15 08:01,2009-02-15 08:01,,2007-02-26 17:00,2007-02-26 17:00,2007-02-26 17:00,2007-02-26 17:00,2007-02-26 17:00,2007-02-26 17:00,,2009-02-15 08:01,2009-02-15 08:01,,PT_Normal,,,,,8PyHqNeXTXipjGs9Q7x+jw,jV7J3L+3ukiSwdNA1oF8xh,,,N,0,0,,,2007-02-01 02:42,2007-02-04 01:00,hbe4678,hbe4678,2007-02-26 17:00,2007-02-26 17:00,0
3002,12459183,14517,6816090,13329,0,100,N,N,N,CP_Units,TT_FinMile,DT_FixedDUR2,RV_OK,TK_Complete,PK030IC220,030 Control Valves - Recv on Site,,,,0,0,0,0,0,0,0,0,,2006-12-29 00:00,2006-12-29 00:00,2009-02-15 08:01,2009-02-15 08:01,,2007-01-27 00:00,2007-01-27 00:00,,,2007-05-24 17:00,2007-05-24 17:00,,,,,PT_Normal,,,,,Hl4mM7U7TdSXdbvrRjGwkA,Fl/f+QHnu0+7IuyM5XjZ4h,,,N,0,0,,,2007-02-01 02:42,2007-02-04 01:05,hbe4678,hbe4678,,,0
3003,12459184,14517,6816090,13329,0,100,N,N,N,CP_Units,TT_FinMile,DT_FixedDUR2,RV_OK,TK_Complete,PK03FMU41Z,03F Recv. at Site - 2002-U Package Boiler,,,,0,0,0,0,0,0,0,0,,2006-10-31 00:00,2006-10-31 00:00,2007-07-31 08:01,2007-07-31 08:01,,2007-01-27 00:00,2007-01-27 00:00,,,2006-10-28 08:01,2006-10-28 08:01,,,,,PT_Normal,,,,,e9ld67utQg6H8XhrNbwp2g,,,,N,0,0,,,2007-02-01 02:42,2007-02-04 01:05,hbe4678,hbe4678,,,0
3004,12459185,14517,6816090,13329,0,0,N,N,N,CP_Units,TT_FinMile,DT_FixedDUR2,RV_OK,TK_NotStart,PK03DMJ36Z,03D Recv. at Site - 2002-J/JA Demineralized Water Pumps,,1264,0,0,0,0,0,0,0,0,0,,,,2007-11-06 08:01,2007-11-06 08:01,,2007-04-14 08:01,2007-04-14 08:01,2007-04-14 08:01,2007-04-14 08:01,2007-04-14 08:01,2007-04-14 08:01,,2007-11-06 08:01,2007-11-06 08:01,,PT_Normal,,,,,XquFMosnRDazW7daVoFrbw,,,,N,0,0,,,2007-02-01 02:42,2007-02-04 01:00,hbe4678,hbe4678,2007-04-14 08:01,2007-04-14 08:01,0
3005,12459186,14517,6816090,13329,0,0,N,N,N,CP_Units,TT_FinMile,DT_FixedDUR2,RV_OK,TK_NotStart,PK03EMU33Z,03E Recv. at Site - 2001-U Demineralizer Unit,,1080,0,0,0,0,0,0,0,0,0,,,,2007-09-04 08:01,2007-09-04 08:01,,2007-03-31 08:01,2007-03-31 08:01,2007-03-31 08:01,2007-03-31 08:01,2007-03-31 08:01,2007-03-31 08:01,,2007-09-04 08:01,2007-09-04 08:01,,PT_Normal,,,,,EYa16AwGSRCeBWhN6vzkCg,,,,N,0,0,,,2007-02-01 02:42,2007-02-04 01:00,hbe4678,hbe4678,2007-03-31 08:01,2007-03-31 08:01,0
3006,12459187,14517,6816090,13329,0,100,N,N,N,CP_Units,TT_FinMile,DT_FixedDrtn,RV_OK,TK_Complete,PK03FMD46Z,03F Recv. at Site - 2006-F Boiler Blowdown Drum,,,,0,0,0,0,0,0,0,0,,2006-12-09 00:00,2006-12-09 00:00,2007-07-31 08:01,2007-07-31 08:01,,2007-01-27 00:00,2007-01-27 00:00,,,2007-01-20 08:01,2007-01-20 08:01,,,,,PT_Normal,,,,,dlw/677JQwSIoGsMIzDQKw,,,,N,0,0,,,2007-02-01 02:42,2007-02-04 01:05,hbe4678,hbe4678,,,0
3007,12459188,14517,6816090,13329,0,0,N,N,N,CP_Units,TT_FinMile,DT_FixedDUR2,RV_OK,TK_NotStart,PK03AML50Z,03A Recv. at Site - 2003-L PAI/IA Compressor Pkg,,759.983333333333,0,0,0,0,0,0,0,0,0,,,,2007-08-15 17:00,2007-08-15 17:00,,2007-04-28 08:01,2007-04-28 08:01,2007-04-28 08:01,2007-04-28 08:01,2007-04-28 08:01,2007-04-28 08:01,,2007-08-15 17:00,2007-08-15 17:00,,PT_Normal,,,,,+3SRkx5CQlSQ7LbZqaVvQQ,,,,N,0,0,,,2007-02-01 02:42,2007-02-04 01:00,hbe4678,hbe4678,2007-04-28 08:01,2007-04-28 08:01,0
3008,12459189,14517,6816090,13329,0,100,N,N,N,CP_Units,TT_FinMile,DT_FixedDrtn,RV_OK,TK_Complete,PK03BMU22Z,03B Recv. at Site - 2401-U Sanitary Treatment Pkg,,,,0,0,0,0,0,0,0,0,,2006-12-08 00:00,2006-12-08 00:00,2007-12-31 08:01,2007-12-31 08:01,,2007-01-27 00:00,2007-01-27 00:00,,,2007-01-27 08:01,2007-01-27 08:01,,,,,PT_Normal,,,,,6/2XA8s2T3ycRROQ1Voznw,,,,N,0,0,,,2007-02-01 02:42,2007-02-04 01:05,hbe4678,hbe4678,,,0
3009,12459190,14517,6816090,13329,0,0,N,N,N,CP_Units,TT_FinMile,DT_FixedDrtn,RV_OK,TK_NotStart,PK03BMU29Z,03B Recv. at Site - 2404-L Oil Skimmer,,1696,0,0,0,0,0,0,0,0,0,,,,2007-12-31 08:01,2007-12-31 08:01,,2007-03-31 08:01,2007-03-31 08:01,2007-03-31 08:01,2007-03-31 08:01,2007-03-31 08:01,2007-03-31 08:01,,2007-12-31 08:01,2007-12-31 08:01,,PT_Normal,,,,,6j0Q186qQIexgiznj/21+A,,,,N,0,0,,,2007-02-01 02:42,2007-02-04 01:00,hbe4678,hbe4678,2007-03-31 08:01,2007-03-31 08:01,0
3010,12459191,14517,6816092,13329,0,0,N,N,N,CP_Units,TT_FinMile,DT_FixedDUR2,RV_OK,TK_NotStart,PK05AMJ37A,05A Recv. at Site - 2100-JA Pumps - MJ307,,1648.01666666667,8,0,0,0,0,0,0,0,0,,,,2008-01-17 08:01,2008-01-17 08:01,,2007-04-23 17:00,2007-04-23 17:00,2007-04-23 17:00,2007-04-23 17:00,2007-04-23 17:00,2007-04-23 17:00,,2008-01-17 08:01,2008-01-17 08:01,,PT_Normal,,,,,fsmyqEtjSOmU45Ax6mfXPQ,fIv+X/fxuEGAgj6ov6y1Zx,,,N,0,0,,,2007-02-01 02:42,2007-02-04 01:00,hbe4678,hbe4678,2007-04-23 17:00,2007-04-23 17:00,0
3011,12459192,14517,6816092,13329,0,0,N,N,N,CP_Units,TT_FinMile,DT_FixedDUR2,RV_OK,TK_NotStart,PK000MJ71Z,05A Recv. at Site - 2108-J Emerg Power Generator,,688,0,0,0,0,0,0,0,0,0,,,,2007-08-27 08:01,2007-08-27 08:01,,2007-05-19 08:01,2007-05-19 08:01,2007-05-19 08:01,2007-05-19 08:01,2007-05-19 08:01,2007-05-19 08:01,,2007-08-27 08:01,2007-08-27 08:01,,PT_Normal,,,,,H9IkVT/RSCmr013sZfPF6Q,pazvrA/udkGHTz5Mke2tpx,,,N,0,0,,,2007-02-01 02:42,2007-02-04 01:00,hbe4678,hbe4678,2007-05-19 08:01,2007-05-19 08:01,0
3012,12459193,14517,6816092,13329,0,0,N,N,N,CP_Units,TT_FinMile,DT_FixedDUR2,RV_OK,TK_NotStart,PK000MJ38A,05A Recv. at Site - 2100-JA Pumps - MJ308,,1720,79.9833333333333,0,0,0,0,0,0,0,0,,,,2008-01-17 08:01,2008-01-17 08:01,,2007-04-14 08:01,2007-04-14 08:01,2007-04-14 08:01,2007-04-14 08:01,2007-04-14 08:01,2007-04-14 08:01,,2008-01-17 08:01,2008-01-17 08:01,,PT_Normal,,,,,wSkfGsHhTOOMk+nv/HtJxQ,OslN8WypzkukoT6bbCoubB,,,N,0,0,,,2007-02-01 02:42,2007-02-04 01:00,hbe4678,hbe4678,2007-04-14 08:01,2007-04-14 08:01,0
3013,12459194,14517,6816092,4047,1,100,N,N,N,CP_Drtn,TT_Task,DT_FixedDUR2,RV_OK,TK_Complete,PK000MU311,05B MU311 Transport/Customes BULK CHEM. STORAGE TANKS,,,,0,0,0,0,240,0,0,0,,2006-11-13 08:00,2006-12-09 00:00,2007-12-04 08:01,2007-12-04 08:01,,2007-01-27 00:00,2007-01-27 00:00,,,2006-11-13 08:00,2006-12-22 17:00,,,,,PT_Normal,,,,,CMV65BPITbmWLiFZiUqaXQ,,,,N,0,0,,,2007-02-01 02:42,2007-02-04 01:05,hbe4678,hbe4678,,,0
3014,12459195,14517,6816092,4047,0,100,N,N,N,CP_Drtn,TT_FinMile,DT_FixedDrtn,RV_OK,TK_Complete,PK03FMU11Z,05B MU311 Recv. at Site - 2109-L HYDROCHLORIC ACID STORAGE,,,,0,0,0,0,0,0,0,0,,2006-12-09 00:00,2006-12-09 00:00,2007-12-04 08:01,2007-12-04 08:01,,2007-01-27 00:00,2007-01-27 00:00,,,2007-01-26 17:00,2007-01-26 17:00,,,,,PT_Normal,,,,,HFNOp9/MRzOMBLVbxmqNNA,,,,N,0,0,,,2007-02-01 02:42,2007-02-04 01:05,hbe4678,hbe4678,,,0
3015,12459196,14517,6816092,4047,0,100,N,N,N,CP_Drtn,TT_FinMile,DT_FixedDrtn,RV_OK,TK_Complete,PK02LMU11Z,05B MU311 Recv. at Site - 2110-L SODIUM HYDROCHLORITE STORAGE,,,,0,0,0,0,0,0,0,0,,2006-12-09 00:00,2006-12-09 00:00,2007-12-04 08:01,2007-12-04 08:01,,2007-01-27 00:00,2007-01-27 00:00,,,2007-01-26 17:00,2007-01-26 17:00,,,,,PT_Normal,,,,,LIX3lro5RLqbpy2gpzCfwA,,,,N,0,0,,,2007-02-01 02:42,2007-02-04 01:05,hbe4678,hbe4678,,,0
3016,12459197,14517,6816092,4047,0,100,N,N,N,CP_Drtn,TT_FinMile,DT_FixedDrtn,RV_OK,TK_Complete,PK02FMU11Z,05B MU311 Recv. at Site - 2109-LA HYDROCHLORIC ACID STORAGE TANK A,,,,0,0,0,0,0,0,0,0,,2006-12-09 00:00,2006-12-09 00:00,2007-12-04 08:01,2007-12-04 08:01,,2007-01-27 00:00,2007-01-27 00:00,,,2007-01-26 17:00,2007-01-26 17:00,,,,,PT_Normal,,,,,YDIjoUWhS4C7TK9FIiukJQ,,,,N,0,0,,,2007-02-01 02:42,2007-02-04 01:05,hbe4678,hbe4678,,,0
3017,12459198,14517,6816092,4047,0,100,N,N,N,CP_Drtn,TT_FinMile,DT_FixedDrtn,RV_OK,TK_Complete,PK02GMU11Z,05B MU311 Recv. at Site - 2109-LB HYDROCHLORIC ACID STORAGE TANK B,,,,0,0,0,0,0,0,0,0,,2006-12-09 00:00,2006-12-09 00:00,2007-12-04 08:01,2007-12-04 08:01,,2007-01-27 00:00,2007-01-27 00:00,,,2007-01-26 17:00,2007-01-26 17:00,,,,,PT_Normal,,,,,yfsIv+fySjiUFJIYmtFZbg,,,,N,0,0,,,2007-02-01 02:42,2007-02-04 01:05,hbe4678,hbe4678,,,0
3018,12459199,14517,6816092,4047,1,100,N,N,N,CP_Drtn,TT_Task,DT_FixedDUR2,RV_OK,TK_Complete,PK000MU11S,05B MU311 - Marshaling HYDROCHLORIC ACID STORAGE,,,,0,0,0,0,320,0,0,0,,2006-08-07 00:00,2006-11-09 00:00,2007-12-04 08:01,2007-12-04 08:01,,2007-01-27 00:00,2007-01-27 00:00,,,2006-08-21 08:00,2006-10-13 17:00,,,,,PT_Normal,,,,,z9/VEY7lQGKLa3xL9br+Ig,,,,N,0,0,,,2007-02-01 02:42,2007-02-04 01:05,hbe4678,hbe4678,,,0
3019,12459200,14517,6816092,4047,1,100,N,N,N,CP_Drtn,TT_Task,DT_FixedDUR2,RV_OK,TK_Complete,PK000MU11K,05B MU311 - Fabricate/PO Promise HYDROCHLORIC ACID STORAGE,,,,0,0,0,0,640,0,0,0,,2006-03-16 00:00,2006-08-04 00:00,2007-12-04 08:01,2007-12-04 08:01,,2007-01-27 00:00,2007-01-27 00:00,,,2006-03-20 08:00,2006-07-07 17:00,,,,,PT_Normal,,,,,t3Ms0OJHQaWZcr/8RJkmyw,,,,N,0,0,,,2007-02-01 02:42,2007-02-04 01:05,hbe4678,hbe4678,,,0
3020,12459201,14517,6816092,13329,0,0,N,N,N,CP_Units,TT_FinMile,DT_FixedDUR2,RV_OK,TK_NotStart,PK000MB71Z,05A Recv. at Site - Storage Flare & Flame FRT Gen.,,2112,623.983333333333,0,0,0,0,0,0,0,0,,,,2008-03-01 08:01,2008-03-01 08:01,,2007-03-31 08:01,2007-03-31 08:01,2007-03-31 08:01,2007-03-31 08:01,2007-03-31 08:01,2007-03-31 08:01,,2008-03-01 08:01,2008-03-01 08:01,,PT_Normal,,,,,0GsYNSsUSvWYvxOWxsnWvw,Ff3VMNrKEEStGG95agh7Qx,,,N,0,0,,,2007-02-01 02:42,2007-02-04 01:00,hbe4678,hbe4678,2007-03-31 08:01,2007-03-31 08:01,0
3021,12459202,14517,6816092,13329,0,0,N,N,N,CP_Units,TT_FinMile,DT_FixedDUR2,RV_OK,TK_NotStart,PK05AMJ36Z,"05A Recv. at Site - 2203-J/JM, 2106-J, 2107-J Pumps",,1656,1407.98333333333,0,0,0,0,0,0,0,0,,,,2008-01-08 08:01,2008-01-08 08:01,,2007-04-14 08:01,2007-04-14 08:01,2007-04-14 08:01,2007-04-14 08:01,2007-04-14 08:01,2007-04-14 08:01,,2008-01-08 08:01,2008-01-08 08:01,,PT_Normal,,,,,MsnuyAJNSDilcR5vYpR3dQ,,,,N,0,0,,,2007-02-01 02:42,2007-02-04 01:00,hbe4678,hbe4678,2007-04-14 08:01,2007-04-14 08:01,0
3022,12459203,14517,6816092,13329,0,100,N,N,N,CP_Units,TT_FinMile,DT_FixedDrtn,RV_OK,TK_Complete,PK05AML33Z,05A Recv. at Site - 2101-L Ammonia Refrigeration Pkg,,,,0,0,0,0,0,0,0,0,,2006-12-09 00:00,2006-12-09 00:00,2008-01-26 08:01,2008-01-26 08:01,,2007-01-27 00:00,2007-01-27 00:00,,,2007-01-27 08:01,2007-01-27 08:01,,,,,PT_Normal,,,,,e02lHoa2Q+y2da8arBjPfA,,,,N,0,0,,,2007-02-01 02:42,2007-02-04 01:05,hbe4678,hbe4678,,,0
3023,12459204,14517,6816092,13329,0,100,N,N,N,CP_Units,TT_FinMile,DT_FixedDUR2,RV_OK,TK_Complete,PK05BML51Z,05B Recv. at Site - 2102-L Loading Arm,,,,0,0,0,0,0,0,0,0,,2006-11-01 00:00,2006-11-01 00:00,2007-12-04 08:01,2007-12-04 08:01,,2007-01-27 00:00,2007-01-27 00:00,,,2006-12-11 17:00,2006-12-11 17:00,,,,,PT_Normal,,,,,cohffVmSQWCWBACPPp+/yg,,,,N,0,0,,,2007-02-01 02:42,2007-02-04 01:05,hbe4678,hbe4678,,,0
3024,12459205,14517,6816092,13329,0,100,N,N,N,CP_Units,TT_FinMile,DT_FixedDUR2,RV_OK,TK_Complete,PK050I1105,050 Orfice Plates - Recv on Site Dock/Storage Area,,,,0,0,0,0,0,0,0,0,,2006-12-07 00:00,2006-12-07 00:00,2009-02-15 08:01,2009-02-15 08:01,,2007-01-27 00:00,2007-01-27 00:00,,,2007-01-27 08:01,2007-01-27 08:01,,,,,PT_Normal,,,,,80jxIIwRTUK5+6HB5Warpw,VYntvdsrREWAbLLq5sNe7h,,,N,0,0,,,2007-02-01 02:42,2007-02-04 01:05,hbe4678,hbe4678,,,0
3025,12459206,14517,6816096,13330,1,100,N,N,N,CP_Units,TT_Task,DT_FixedDUR2,RV_OK,TK_Complete,EK04API030,04A Conceptual Layout - Supersketches,,,,0,0,0,0,80,0,0,0,,2005-10-28 00:00,2006-09-25 08:01,2007-05-07 08:00,2007-05-07 08:00,,2007-01-27 00:00,2007-01-27 00:00,,,2005-10-31 08:00,2005-11-11 17:00,,,,,PT_Normal,,,,,hnFQTeoGSbym838qxWLYLw,SRpSOtKoBUi5u6Rokia9Px,,,N,0,0,,,2007-02-01 02:42,2007-02-04 01:05,hbe4678,hbe4678,,,0
3026,12459207,14517,6816099,13330,0,100,N,N,N,CP_Units,TT_FinMile,DT_FixedDUR2,RV_OK,TK_Complete,EK04ASY170,04A OSBL P&IDs IPL & Line List Issue Milestone,,,,0,0,0,0,0,0,0,0,,2005-11-11 00:00,2005-11-11 00:00,2007-05-07 08:00,2007-05-07 08:00,,2007-01-27 00:00,2007-01-27 00:00,,,2005-12-09 17:00,2005-12-09 17:00,,,,,PT_Normal,,,,,j9KkRjicTECinxYCa4JC2Q,gB9OC9xSr06ZmcIJ/feTBR,,,N,0,0,,,2007-02-01 02:42,2007-02-04 01:05,hbe4678,hbe4678,,,0
3027,12459208,14517,6816110,13330,1,100,N,N,N,CP_Units,TT_Task,DT_FixedDUR2,RV_OK,TK_Complete,EK04AIC120,04A Instrument Detail Model / Review,,,,0,0,0,0,200,0,0,0,2006-10-23 08:00,2006-10-23 08:00,2006-11-14 00:00,2007-07-09 08:00,2007-07-09 08:00,,2007-01-27 00:00,2007-01-27 00:00,,,2006-10-23 08:00,2006-11-24 17:00,,,,CS_MSOB,PT_Normal,,,,,nBl3+EaERpi8L9ytvRs1Og,uBPPymjM4ESX2gPCAGG7fx,,,N,0,0,,,2007-02-01 02:42,2007-02-04 01:05,hbe4678,hbe4678,,,0
3028,12459209,14517,6816110,13330,1,100,N,N,N,CP_Units,TT_Task,DT_FixedDUR2,RV_OK,TK_Complete,EK04AIC300,04A In Line Instrument Approved Vendor Data,,,,0,0,0,0,160,0,0,0,,2006-02-01 00:00,2006-05-15 17:00,2007-07-04 08:01,2007-07-04 08:01,,2007-01-27 00:00,2007-01-27 00:00,,,2005-11-03 08:00,2005-11-30 17:00,,,,,PT_Normal,,,,,C5Tq1ZGmRXeuppWDqRdERQ,pPJZlL1Ji0KjeQzxy4krPA,,,N,0,0,,,2007-02-01 02:42,2007-02-04 01:05,hbe4678,hbe4678,,,0
3029,12459210,14517,6816116,4047,1,100,N,N,N,CP_Drtn,TT_Task,DT_FixedDUR2,RV_OK,TK_Complete,PK05AMF25,05A MF311  2101/2102-F Ammonia Storage Tanks - Prod. V. Data (Subcontract),,,,0,0,0,0,280,0,0,0,,2006-08-01 00:00,2006-09-15 00:00,2007-02-07 08:01,2007-02-07 08:01,,2007-01-27 00:00,2007-01-27 00:00,,,2006-08-14 08:00,2006-09-29 17:00,,,,,PT_Normal,,,,,hbHSOsflRDSulJqbFwkOHQ,,,,N,0,0,,,2007-02-01 02:42,2007-02-04 01:05,hbe4678,hbe4678,,,0
3030,12459211,14517,6816116,4047,1,100,N,N,N,CP_Drtn,TT_Task,DT_FixedDUR2,RV_OK,TK_Complete,PK05AMF05,05A MF311  2101/2102-F Ammonia Storage Tanks - Foundation V. Data (Subcontract),,,,0,0,0,0,280,0,0,0,,2006-03-13 08:00,2006-07-31 17:00,2007-02-07 08:01,2007-02-07 08:01,,2007-01-27 00:00,2007-01-27 00:00,,,2006-03-13 08:00,2006-04-28 17:00,,,,,PT_Normal,,,,,rv4e5Lg5R+aKwcxgYc7PqQ,,,,N,0,0,,,2007-02-01 02:42,2007-02-04 01:05,hbe4678,hbe4678,,,0
3031,12459212,14517,6816116,13330,1,100,N,N,N,CP_Units,TT_Task,DT_FixedDUR2,RV_OK,TK_Complete,EK000MF32C,05A MF312  2105-F Water Tank - Issue Data for Subcontract,,,,0,0,0,0,120,0,0,0,,2005-04-26 08:00,2005-05-09 17:00,2007-01-09 08:01,2007-01-09 08:01,,2007-01-27 00:00,2007-01-27 00:00,,,2005-04-26 08:00,2005-05-16 17:00,,,,,PT_Normal,,,,,MKLC01FVRaCOXuYsQgqDtA,Ys0WpgoCg0+NxnQgBaoRTB,,,N,0,0,,,2007-02-01 02:42,2007-02-04 01:05,hbe4678,hbe4678,,,0
3032,12459213,14517,6816116,4047,1,100,N,N,N,CP_Drtn,TT_Task,DT_FixedDUR2,RV_OK,TK_Complete,PK000MF32D,05A MF312  2105-F Water Tank - Fdn. Vendor Data (From Subcontract),,,,0,0,0,0,280,0,0,0,,2006-03-13 08:00,2006-04-03 00:00,2007-01-09 08:01,2007-01-09 08:01,,2007-01-27 00:00,2007-01-27 00:00,,,2006-03-13 08:00,2006-04-28 17:00,,,,,PT_Normal,,,,,0W2lk3liQsyRQw/qJrtZdg,h7Q1BUgOYkqLkDtPqwJk8g,,,N,0,0,,,2007-02-01 02:42,2007-02-04 01:05,hbe4678,hbe4678,,,0
3033,12459214,14517,6816116,4047,1,100,N,N,N,CP_Drtn,TT_Task,DT_FixedDUR2,RV_OK,TK_Complete,PK05AMF33,05A MF312  2105-F - Piping Prod. V. Data (Subcontract),,,,0,0,0,0,280,0,0,0,,2006-03-13 08:00,2006-04-03 00:00,2007-02-07 08:01,2007-02-07 08:01,,2007-01-27 00:00,2007-01-27 00:00,,,2006-03-13 08:00,2006-04-28 17:00,,,,,PT_Normal,,,,,TQwYHR9CSFqGqWSL5Z2Rjw,h7Q1BUgOYkqLkDtPqwJk8g,,,N,0,0,,,2007-02-01 02:42,2007-02-04 01:05,hbe4678,hbe4678,,,0
3034,12459215,14517,6816116,4047,1,100,N,N,N,CP_Drtn,TT_Task,DT_FixedDUR2,RV_OK,TK_Complete,PK05AMF34,05A MF312  2105-F - Civil Prod. V. Data (Subcontract),,,,0,0,0,0,280,0,0,0,,2006-03-13 08:00,2006-04-03 00:00,2007-02-07 08:01,2007-02-07 08:01,,2007-01-27 00:00,2007-01-27 00:00,,,2006-03-13 08:00,2006-04-28 17:00,,,,,PT_Normal,,,,,06udQ7+fSnS1VgHNt7mCBQ,h7Q1BUgOYkqLkDtPqwJk8g,,,N,0,0,,,2007-02-01 02:42,2007-02-04 01:05,hbe4678,hbe4678,,,0
3035,12459216,14517,6816116,4047,1,100,N,N,N,CP_Drtn,TT_Task,DT_FixedDUR2,RV_OK,TK_Complete,PK05AMF35,05A MF312  2105-F - E&I Prod. V. Data (Subcontract),,,,0,0,0,0,280,0,0,0,,2006-03-13 08:00,2006-04-03 00:00,2009-01-13 08:00,2009-01-13 08:00,,2007-01-27 00:00,2007-01-27 00:00,,,2006-03-13 08:00,2006-04-28 17:00,,,,,PT_Normal,,,,,BDR0ohbYRy+kgTdV7eKVNw,h7Q1BUgOYkqLkDtPqwJk8g,,,N,0,0,,,2007-02-01 02:42,2007-02-04 01:05,hbe4678,hbe4678,,,0
3036,12459217,14517,6816117,4047,1,100,N,N,N,CP_Drtn,TT_Task,DT_FixedDUR2,RV_OK,TK_Complete,PK05AMLV05,05A ML501  2103-L - Civil Prod. V. Data,,,,0,0,0,0,280,0,0,0,,2006-03-27 08:00,2006-08-09 00:00,2007-02-07 08:01,2007-02-07 08:01,,2007-01-27 00:00,2007-01-27 00:00,,,2006-03-27 08:00,2006-05-12 17:00,,,,,PT_Normal,,,,,4xjF3zkdQd2a4Zc3dmBrQw,q3qneAFz706gep/YCST8Kw,,,N,0,0,,,2007-02-01 02:42,2007-02-04 01:05,hbe4678,hbe4678,,,0
3037,12459218,14517,6816117,4047,1,100,N,N,N,CP_Drtn,TT_Task,DT_FixedDUR2,RV_OK,TK_Complete,PK05AMLV06,05A ML501  2103-L - E&I Prod. V. Data,,,,0,0,0,0,280,0,0,0,,2006-03-27 08:00,2006-11-27 17:00,2009-01-13 08:00,2009-01-13 08:00,,2007-01-27 00:00,2007-01-27 00:00,,,2006-03-27 08:00,2006-05-12 17:00,,,,,PT_Normal,,,,,aPIx7PX/R5qDPsOZiA5leg,q3qneAFz706gep/YCST8Kw,,,N,0,0,,,2007-02-01 02:42,2007-02-04 01:05,hbe4678,hbe4678,,,0
3038,12459219,14517,6816117,4047,1,100,N,N,N,CP_Drtn,TT_Task,DT_FixedDUR2,RV_OK,TK_Complete,PK05BMLV01,05B ML512  2102-L - Piping Prod. V. Data,,,,0,0,0,0,280,0,0,0,,2006-01-30 08:00,2006-04-21 00:00,2007-06-15 17:00,2007-06-15 17:00,,2007-01-27 00:00,2007-01-27 00:00,,,2006-01-30 08:00,2006-03-17 17:00,,,,,PT_Normal,,,,,TIdOhj6SSvCOfqqCjG+4qQ,lZe62XbPaU6WcO6wME5hYA,,,N,0,0,,,2007-02-01 02:42,2007-02-04 01:05,hbe4678,hbe4678,,,0
3039,12459220,14517,6816117,4047,1,100,N,N,N,CP_Drtn,TT_Task,DT_FixedDUR2,RV_OK,TK_Complete,PK05BMLV02,05B ML512  2102-L - Civil Prod. V. Data,,,,0,0,0,0,280,0,0,0,,2006-01-30 08:00,2006-04-21 00:00,2007-12-25 08:01,2007-12-25 08:01,,2007-01-27 00:00,2007-01-27 00:00,,,2006-01-30 08:00,2006-03-17 17:00,,,,,PT_Normal,,,,,391OVpWnRhis744bsiumLQ,lZe62XbPaU6WcO6wME5hYA,,,N,0,0,,,2007-02-01 02:42,2007-02-04 01:05,hbe4678,hbe4678,,,0
3040,12459221,14517,6816117,4047,1,100,N,N,N,CP_Drtn,TT_Task,DT_FixedDUR2,RV_OK,TK_Complete,PK05AMJV10,05A MJ731  2108-J - Civil Prod. V. Data,,,,0,0,0,0,280,0,0,0,,2006-07-10 00:00,2006-10-06 17:00,2007-02-07 08:01,2007-02-07 08:01,,2007-01-27 00:00,2007-01-27 00:00,,,2006-08-21 08:00,2006-10-06 17:00,,,,,PT_Normal,,,,,qWXTX5g1SziG2tRkCGvTCw,yJYjxzGcDUS6w7dC/UghxA,,,N,0,0,,,2007-02-01 02:42,2007-02-04 01:05,hbe4678,hbe4678,,,0
3041,12459222,14517,6816117,4047,1,100,N,N,N,CP_Drtn,TT_Task,DT_FixedDUR2,RV_OK,TK_Complete,PK05AMJV11,05A MJ731  2108-J - E&I Prod. V. Data,,,,0,0,0,0,280,0,0,0,,2006-07-10 00:00,2006-12-13 17:00,2009-01-13 08:00,2009-01-13 08:00,,2007-01-27 00:00,2007-01-27 00:00,,,2006-08-22 08:00,2006-10-09 17:00,,,,,PT_Normal,,,,,7B8A3c+RSvi6OIggZiyaYw,yJYjxzGcDUS6w7dC/UghxA,,,N,0,0,,,2007-02-01 02:42,2007-02-04 01:05,hbe4678,hbe4678,,,0
3042,12459223,14517,6816117,4047,1,100,N,N,N,CP_Drtn,TT_Task,DT_FixedDUR2,RV_OK,TK_Complete,PK05AMLV02,05A ML330  2101-L - Civil Prod. V. Data,,,,0,0,0,0,280,0,0,0,,2006-01-30 08:00,2006-06-27 00:00,2007-02-07 08:01,2007-02-07 08:01,,2007-01-27 00:00,2007-01-27 00:00,,,2006-01-30 08:00,2006-03-17 17:00,,,,,PT_Normal,,,,,+AYE7weBQtKMUT2a69/aaA,jOrULuHlT0iyLQbxDPFFIg,,,N,0,0,,,2007-02-01 02:42,2007-02-04 01:05,hbe4678,hbe4678,,,0
3043,12459224,14517,6816117,4047,1,100,N,N,N,CP_Drtn,TT_Task,DT_FixedDUR2,RV_OK,TK_Complete,PK05AMLV03,05A ML330  2101-L - E&I Prod. V. Data,,,,0,0,0,0,280,0,0,0,,2006-01-30 08:00,2006-07-07 17:00,2009-02-13 17:00,2009-02-13 17:00,,2007-01-27 00:00,2007-01-27 00:00,,,2006-01-30 08:00,2006-03-17 17:00,,,,,PT_Normal,,,,,B/c3wUnrRsm0Xwdbn5JnOg,jOrULuHlT0iyLQbxDPFFIg,,,N,0,0,,,2007-02-01 02:42,2007-02-04 01:05,hbe4678,hbe4678,,,0
3044,12459225,14517,6816117,4047,1,100,N,N,N,CP_Drtn,TT_Task,DT_FixedDUR2,RV_OK,TK_Complete,PK05AMJV07,05A MJ392  2105-JA/JB - Piping Prod. V. Data,,,,0,0,0,0,280,0,0,0,,2006-04-17 08:00,2006-06-09 00:00,2007-02-07 08:01,2007-02-07 08:01,,2007-01-27 00:00,2007-01-27 00:00,,,2006-04-17 08:00,2006-06-02 17:00,,,,,PT_Normal,,,,,h5KgpfcnTKSwP2Si5uJ8Eg,WEiyRXMlOEKQysfvg5ap1Q,,,N,0,0,,,2007-02-01 02:42,2007-02-04 01:05,hbe4678,hbe4678,,,0
3045,12459226,14517,6816117,4047,1,100,N,N,N,CP_Drtn,TT_Task,DT_FixedDUR2,RV_OK,TK_Complete,PK05AMJV08,05A MJ392  2105-JA/JB - Civil Prod. V. Data,,,,0,0,0,0,280,0,0,0,,2006-04-17 08:00,2006-06-09 00:00,2007-02-07 08:01,2007-02-07 08:01,,2007-01-27 00:00,2007-01-27 00:00,,,2006-04-17 08:00,2006-06-02 17:00,,,,,PT_Normal,,,,,gavKEuRRTOSopYAh6OBDDA,WEiyRXMlOEKQysfvg5ap1Q,,,N,0,0,,,2007-02-01 02:42,2007-02-04 01:05,hbe4678,hbe4678,,,0
3046,12459227,14517,6816117,4047,1,100,N,N,N,CP_Drtn,TT_Task,DT_FixedDUR2,RV_OK,TK_Complete,PK05AMJV09,05A MJ392  2105-JA/JB - E&I Prod. V. Data,,,,0,0,0,0,280,0,0,0,,2006-04-17 08:00,2006-10-06 17:00,2009-01-13 08:00,2009-01-13 08:00,,2007-01-27 00:00,2007-01-27 00:00,,,2006-04-17 08:00,2006-06-02 17:00,,,,,PT_Normal,,,,,Aqv8cmA5T8qz1Y9AvVbqZw,tY+BJBVTOEKpn0nI/SI8Kw,,,N,0,0,,,2007-02-01 02:42,2007-02-04 01:05,hbe4678,hbe4678,,,0
3047,12459228,14517,6816117,4047,1,100,N,N,N,CP_Drtn,TT_Task,DT_FixedDUR2,RV_OK,TK_Complete,PK05AMLV01,05A ML330  2101-L - Piping Prod. V. Data,,,,0,0,0,0,280,0,0,0,,2006-01-30 08:00,2006-06-06 17:00,2007-03-05 08:00,2007-03-05 08:00,,2007-01-27 00:00,2007-01-27 00:00,,,2006-01-30 08:00,2006-03-17 17:00,,,,,PT_Normal,,,,,DOuMcWBBTi+i61GJWJEFIA,jOrULuHlT0iyLQbxDPFFIg,,,N,0,0,,,2007-02-01 02:42,2007-02-04 01:05,hbe4678,hbe4678,,,0
3048,12459229,14517,6816117,4047,1,100,N,N,N,CP_Drtn,TT_Task,DT_FixedDUR2,RV_OK,TK_Complete,PK05AMJV04,05A MJ307  2100-JA/JB - Piping Prod. V. Data,,,,0,0,0,0,280,0,0,0,,2006-02-20 00:00,2006-07-12 00:00,2007-03-05 08:00,2007-03-05 08:00,,2007-01-27 00:00,2007-01-27 00:00,,,2006-03-27 08:00,2006-05-12 17:00,,,,,PT_Normal,,,,,UzDOXo+yQ2i4abWxPGHc+w,GnqRh3SBt0eIji7U0MYW2w,,,N,0,0,,,2007-02-01 02:42,2007-02-04 01:05,hbe4678,hbe4678,,,0
3049,12459230,14517,6816117,4047,1,100,N,N,N,CP_Drtn,TT_Task,DT_FixedDUR2,RV_OK,TK_Complete,PK05AMJV05,05A MJ307  2100-JA/JB - Civil Prod. V. Data,,,,0,0,0,0,280,0,0,0,,2006-02-20 00:00,2006-07-12 00:00,2007-02-07 08:01,2007-02-07 08:01,,2007-01-27 00:00,2007-01-27 00:00,,,2006-03-27 08:00,2006-05-12 17:00,,,,,PT_Normal,,,,,0VQZjJkuTp2B/2iFWqdHMg,GnqRh3SBt0eIji7U0MYW2w,,,N,0,0,,,2007-02-01 02:42,2007-02-04 01:05,hbe4678,hbe4678,,,0
3050,12459231,14517,6816117,4047,1,100,N,N,N,CP_Drtn,TT_Task,DT_FixedDUR2,RV_OK,TK_Complete,PK05AMJV06,05A MJ307  2100-JA/JB - E&I Prod. V. Data,,,,0,0,0,0,280,0,0,0,,2006-02-20 00:00,2006-08-08 00:00,2009-01-13 08:00,2009-01-13 08:00,,2007-01-27 00:00,2007-01-27 00:00,,,2006-03-27 08:00,2006-05-12 17:00,,,,,PT_Normal,,,,,lldXkaQXTEC0Jy0SHLboSQ,whqnQPMjO0GK5pIAK7/leQ,,,N,0,0,,,2007-02-01 02:42,2007-02-04 01:05,hbe4678,hbe4678,,,0
3051,12459232,14517,6816117,4047,1,100,N,N,N,CP_Drtn,TT_Task,DT_FixedDUR2,RV_OK,TK_Complete,PK05AMJV01,"05A MJ305  2106-J,2107-J - Piping Prod. V. Data",,,,0,0,0,0,280,0,0,0,,2006-01-30 08:00,2006-04-03 00:00,2007-02-07 08:01,2007-02-07 08:01,,2007-01-27 00:00,2007-01-27 00:00,,,2006-01-30 08:00,2006-03-17 17:00,,,,,PT_Normal,,,,,DWotAhbBSPaChlUAGwezkA,IMRYqNaXP0yDh1zPf2h3hA,,,N,0,0,,,2007-02-01 02:42,2007-02-04 01:05,hbe4678,hbe4678,,,0
3052,12459233,14517,6816117,4047,1,100,N,N,N,CP_Drtn,TT_Task,DT_FixedDUR2,RV_OK,TK_Complete,PK05AMJV02,"05A MJ305  2106-J,2107-J - Civil Prod. V. Data",,,,0,0,0,0,280,0,0,0,,2006-01-30 08:00,2006-04-20 00:00,2007-01-09 08:01,2007-01-09 08:01,,2007-01-27 00:00,2007-01-27 00:00,,,2006-01-30 08:00,2006-03-17 17:00,,,,,PT_Normal,,,,,VM2M75h2SWuRh1aAFi7J8Q,IMRYqNaXP0yDh1zPf2h3hA,,,N,0,0,,,2007-02-01 02:42,2007-02-04 01:05,hbe4678,hbe4678,,,0
3053,12459234,14517,6816117,4047,1,100,N,N,N,CP_Drtn,TT_Task,DT_FixedDUR2,RV_OK,TK_Complete,PK05AMJV03,"05A MJ305  2106-J,2107-J - E&I Prod. V. Data",,,,0,0,0,0,280,0,0,0,,2006-01-30 08:00,2006-04-21 00:00,2009-01-13 08:00,2009-01-13 08:00,,2007-01-27 00:00,2007-01-27 00:00,,,2006-01-30 08:00,2006-03-17 17:00,,,,,PT_Normal,,,,,tZzMkaVEQMO9/Vo/jjSdtA,WMzkDUuc60O5qb/IX2a/8w,,,N,0,0,,,2007-02-01 02:42,2007-02-04 01:05,hbe4678,hbe4678,,,0
3054,12459235,14517,6816117,4047,1,100,N,N,N,CP_Drtn,TT_Task,DT_FixedDUR2,RV_OK,TK_Complete,PK05BMU06,"05B MU311  2109-LA/LB, 2110-L - Piping Prod. V. Data",,,,0,0,0,0,280,0,0,0,,2006-04-14 00:00,2006-05-30 00:00,2007-06-15 17:00,2007-06-15 17:00,,2007-01-27 00:00,2007-01-27 00:00,,,2006-04-27 08:00,2006-06-14 17:00,,,,,PT_Normal,,,,,cv5/n4tkQiezFVmpYjxmeg,c19bzGvhREWeosG4dtBkyQ,,,N,0,0,,,2007-02-01 02:42,2007-02-04 01:05,hbe4678,hbe4678,,,0
3055,12459236,14517,6816117,4047,1,100,N,N,N,CP_Drtn,TT_Task,DT_FixedDUR2,RV_OK,TK_Complete,PK05BMU07,"05B MU311  2109-LA/LB, 2110-L - Civil Prod. V. Data",,,,0,0,0,0,280,0,0,0,,2006-04-14 00:00,2006-05-30 00:00,2007-05-08 08:01,2007-05-08 08:01,,2007-01-27 00:00,2007-01-27 00:00,,,2006-04-27 08:00,2006-06-14 17:00,,,,,PT_Normal,,,,,s68+NxdnToKpOv39IaiVCA,c19bzGvhREWeosG4dtBkyQ,,,N,0,0,,,2007-02-01 02:42,2007-02-04 01:05,hbe4678,hbe4678,,,0
3056,12459237,14517,6816117,13330,1,100,N,N,N,CP_Units,TT_Task,DT_FixedDUR2,RV_OK,TK_Complete,PK05AMJ154,05A Recv. Planning V. Data - Pumps 2106/7-J,,,,0,0,0,0,8,0,0,0,,2005-10-17 08:00,2005-10-17 17:00,2007-01-09 08:01,2007-01-09 08:01,,2007-01-27 00:00,2007-01-27 00:00,,,2005-10-17 08:00,2005-10-17 17:00,,,,,PT_Normal,,,,,ASL3enFsTBmc3VXCSaaVnQ,146C+5FXmk+TXj/ZJJ/oYR,,,N,0,0,,,2007-02-01 02:42,2007-02-04 01:05,hbe4678,hbe4678,,,0
3057,12459238,14517,6816117,13330,1,100,N,N,N,CP_Units,TT_Task,DT_FixedDUR2,RV_OK,TK_Complete,PK05AML100,05A Recv. Planning V. Data - Special Equip.,,,,0,0,0,0,8,0,0,0,,2005-10-31 08:00,2005-10-31 17:00,2007-01-09 08:01,2007-01-09 08:01,,2007-01-27 00:00,2007-01-27 00:00,,,2005-10-31 08:00,2005-10-31 17:00,,,,,PT_Normal,,,,,AjMfGgZvRt6gj6/D3AaL+w,M4IdQdnvqUCj2vH7xyx6oh,,,N,0,0,,,2007-02-01 02:42,2007-02-04 01:05,hbe4678,hbe4678,,,0
3058,12459239,14517,6816117,13330,1,100,N,N,N,CP_Units,TT_Task,DT_FixedDUR2,RV_OK,TK_Complete,PK05BML100,05B Recv. Planning V. Data - Special Equip. 2102-L,,,,0,0,0,0,8,0,0,0,,2005-10-31 08:00,2005-10-31 17:00,2007-05-14 08:00,2007-05-14 08:00,,2007-01-27 00:00,2007-01-27 00:00,,,2005-10-31 08:00,2005-10-31 17:00,,,,,PT_Normal,,,,,nuoAyygcRNS9wYyFCbvovg,XzBK/rHu9kmcq37O2kJYrh,,,N,0,0,,,2007-02-01 02:42,2007-02-04 01:05,hbe4678,hbe4678,,,0
3059,12459240,14517,6816117,13330,1,100,N,N,N,CP_Units,TT_Task,DT_FixedDUR2,RV_OK,TK_Complete,PK000MJ37Q,Prepare & Issue Prelim. RFQ - MJ307 to Proc.,,,,0,0,0,,80,,0,0,,2005-07-01 00:00,2005-07-13 00:00,2007-01-09 08:01,2007-01-09 08:01,,2007-01-27 00:00,2007-01-27 00:00,,,2005-03-21 08:00,2005-04-01 17:00,,,,,PT_Normal,,,,,01ONnOFJRDmCGC/hhqkVXg,sR/IDzQ8XECySJCR/8PwYR,,,N,0,0,,,2007-02-01 02:42,2007-02-04 01:05,hbe4678,hbe4678,,,0
3060,12459241,14517,6816117,13330,1,100,N,N,N,CP_Units,TT_Task,DT_FixedDUR2,RV_OK,TK_Complete,PK000MJ37E,Technical Evaluation  - MJ307,,,,0,0,0,0,40,0,0,0,,2005-08-19 00:00,2006-01-06 00:00,2007-01-09 08:01,2007-01-09 08:01,,2007-01-27 00:00,2007-01-27 00:00,,,2006-01-03 08:00,2006-01-09 17:00,,,,,PT_Normal,,,,,SPiU7bS0TM+85B5hQxE6Dw,YL2c5Uhel0KXuAcbuols6h,,,N,0,0,,,2007-02-01 02:42,2007-02-04 01:05,hbe4678,hbe4678,,,0
3061,12459242,14517,6816117,13330,1,100,N,N,N,CP_Units,TT_Task,DT_FixedDUR2,RV_OK,TK_Complete,PK000MJ37T,Recv. Planning V. Data MJ307,,,,0,0,0,0,160,0,0,0,,2006-02-20 00:00,2006-02-23 00:00,2007-01-09 08:01,2007-01-09 08:01,,2007-01-27 00:00,2007-01-27 00:00,,,2006-03-06 08:00,2006-03-31 17:00,,,,,PT_Normal,,,,,Xefua+OaSXOznKMT8dt5Xw,Y8D9HKryPEaH2c56OXT9dR,,,N,0,0,,,2007-02-01 02:42,2007-02-04 01:05,hbe4678,hbe4678,,,0
3062,12459243,14517,6816117,13330,1,100,N,N,N,CP_Units,TT_Task,DT_FixedDUR2,RV_OK,TK_Complete,PK000MJ38Q,Prepare & Issue Prelim. RFQ - MJ308 to Proc.,,,,0,0,0,,80,,0,0,,2006-02-01 00:00,2006-02-13 00:00,2007-01-09 08:01,2007-01-09 08:01,,2007-01-27 00:00,2007-01-27 00:00,,,2005-03-21 08:00,2005-04-01 17:00,,,,,PT_Normal,,,,,MMBHDafIQVmxU8qB/0edEA,EXGLTBUgXEiNpMCFSUffXx,,,N,0,0,,,2007-02-01 02:42,2007-02-04 01:05,hbe4678,hbe4678,,,0
3063,12459244,14517,6816117,13330,1,100,N,N,N,CP_Units,TT_Task,DT_FixedDUR2,RV_OK,TK_Complete,PK000MJ38E,Technical Evaluation  - MJ308,,,,0,0,0,0,40,0,0,0,,2006-03-13 00:00,2006-04-27 00:00,2007-01-09 08:01,2007-01-09 08:01,,2007-01-27 00:00,2007-01-27 00:00,,,2006-03-21 08:00,2006-03-27 17:00,,,,,PT_Normal,,,,,BpQwafDrRDWCzU4IZ0IKNw,6iekEZeHg0+boDudMZjVwx,,,N,0,0,,,2007-02-01 02:42,2007-02-04 01:05,hbe4678,hbe4678,,,0
3064,12459245,14517,6816117,13330,1,100,N,N,N,CP_Units,TT_Task,DT_FixedDUR2,RV_OK,TK_Complete,PK000MJ38T,Recv. Planning V. Data MJ308,,,,0,0,0,0,160,0,0,0,,2006-05-24 00:00,2006-06-28 00:00,2007-01-09 08:01,2007-01-09 08:01,,2007-01-27 00:00,2007-01-27 00:00,,,2006-05-22 08:00,2006-06-16 17:00,,,,,PT_Normal,,,,,lQ3Bu6vXRuCARXS2lgDn3Q,Rjkoqy0h2EOSmYIT6ABm3h,,,N,0,0,,,2007-02-01 02:42,2007-02-04 01:05,hbe4678,hbe4678,,,0
3065,12459246,14517,6816117,4047,1,100,N,N,N,CP_Drtn,TT_Task,DT_FixedDUR2,RV_OK,TK_Complete,PK05BMLV03,05B ML512  2102-L - E&I Prod. V. Data,,,,0,0,0,0,280,0,0,0,,2006-01-30 08:00,2006-05-30 17:00,2009-01-13 08:00,2009-01-13 08:00,,2007-01-27 00:00,2007-01-27 00:00,,,2006-01-30 08:00,2006-03-17 17:00,,,,,PT_Normal,,,,,YhzuFALHTXmFqdo9gxQy5Q,lZe62XbPaU6WcO6wME5hYA,,,N,0,0,,,2007-02-01 02:42,2007-02-04 01:05,hbe4678,hbe4678,,,0
3066,12459247,14517,6816117,4047,1,100,N,N,N,CP_Drtn,TT_Task,DT_FixedDUR2,RV_OK,TK_Complete,PK05AMLV04,05A ML501  2103-L - Piping Prod. V. Data,,,,0,0,0,0,280,0,0,0,,2006-03-27 08:00,2006-08-09 00:00,2007-03-05 08:00,2007-03-05 08:00,,2007-01-27 00:00,2007-01-27 00:00,,,2006-03-27 08:00,2006-05-12 17:00,,,,,PT_Normal,,,,,hduIrGzCRqWfQkhz5QF6PA,q3qneAFz706gep/YCST8Kw,,,N,0,0,,,2007-02-01 02:42,2007-02-04 01:05,hbe4678,hbe4678,,,0
3067,12459248,14517,6816118,13330,1,100,N,N,N,CP_Units,TT_Task,DT_FixedDUR2,RV_OK,TK_Complete,EK050PI014,Plot Plan - Dock/Storage Issue IFC,,,,0,0,0,0,240,0,0,0,,2006-02-27 08:00,2006-11-17 00:00,2009-02-15 08:01,2009-02-15 08:01,,2007-01-27 00:00,2007-01-27 00:00,,,2006-02-27 08:00,2006-04-07 17:00,,,,,PT_Normal,,,,,zJyOsSOORYWREP43A64Gtg,rf6doulUp0KRxCEP6PtKlx,,,N,0,0,,,2007-02-01 02:42,2007-02-04 01:05,hbe4678,hbe4678,,,0
3068,12459249,14517,6816118,13330,1,100,N,N,N,CP_Units,TT_Task,DT_FixedDUR2,RV_OK,TK_Complete,EK050PI005,Develop Plot Plan & ID Areas - Dock/Storage IFI,,,,0,,0,,80,,,0,,2005-04-01 08:00,2005-04-08 17:00,2006-12-25 08:00,2006-12-25 08:00,,2007-01-27 00:00,2007-01-27 00:00,,,2005-04-01 08:00,2005-04-14 17:00,,,,,PT_Normal,,,,,C6rmA+OlQWWY07o0zIfKIQ,syOQMx3aqEGh/3uIR8DjlB,,,N,,,,,2007-02-01 02:42,2007-02-04 01:05,hbe4678,hbe4678,,,0
3069,12459250,14517,6816118,13330,1,100,N,N,N,CP_Units,TT_Task,DT_FixedDUR2,RV_OK,TK_Complete,EK050PI011,Plot Plan - Dock/Storage Client ICA Approval,,,,0,0,0,0,80,0,0,0,,2005-11-11 00:00,2005-11-25 17:00,2007-02-07 08:01,2007-02-07 08:01,,2007-01-27 00:00,2007-01-27 00:00,,,2005-10-31 08:00,2005-11-11 17:00,,,,,PT_Normal,,,,,xsdC8UchTfmWbH20QAuHwA,pqtDRyT4nku0Nu/IugkLOx,,,N,0,0,,,2007-02-01 02:42,2007-02-04 01:05,hbe4678,hbe4678,,,0
3070,12459251,14517,6816118,13330,1,100,N,N,N,CP_Units,TT_Task,DT_FixedDUR2,RV_OK,TK_Complete,EK050PI010,Develop Plot Plan & ID Areas - Dock/Storage ICA,,,,0,0,0,0,160,0,0,0,,2005-04-22 08:00,2005-11-11 00:00,2007-02-07 08:01,2007-02-07 08:01,,2007-01-27 00:00,2007-01-27 00:00,,,2005-04-22 08:00,2005-05-19 17:00,,,,,PT_Normal,,,,,+tztX5UJSqu3LyRP8PRxBQ,8RWukPkirUK8yu0s+3IEVh,,,N,0,0,,,2007-02-01 02:42,2007-02-04 01:05,hbe4678,hbe4678,,,0
3071,12459252,14517,6816118,13330,1,100,N,N,N,CP_Units,TT_Task,DT_FixedDUR2,RV_OK,TK_Complete,EK050PI012,Plot Plan - Dock/Storage Issue IPL,,,,0,0,0,0,240,0,0,0,,2005-10-17 00:00,2005-11-25 17:00,2007-02-07 08:01,2007-02-07 08:01,,2007-01-27 00:00,2007-01-27 00:00,,,2005-09-29 08:00,2005-11-09 17:00,,,,,PT_Normal,,,,,3yIzmQeVR8ay7whr5TdKRw,zMeqahYLQkejt39rA7/Kix,,,N,0,0,,,2007-02-01 02:42,2007-02-04 01:05,hbe4678,hbe4678,,,0
3072,12459253,14517,6816118,13330,1,100,N,N,N,CP_Units,TT_Task,DT_FixedDUR2,RV_OK,TK_Complete,EK05API030,05A Conceptual Layout - Supersketches,,,,0,0,0,0,120,0,0,0,,2005-09-12 00:00,2005-10-28 17:00,2007-01-09 08:01,2007-01-09 08:01,,2007-01-27 00:00,2007-01-27 00:00,,,2005-10-10 08:00,2005-10-28 17:00,,,,,PT_Normal,,,,,Ym8hskMASpqyutC7M/W3NA,wiuVBMERL0KPJkBJzy0HYR,,,N,0,0,,,2007-02-01 02:42,2007-02-04 01:05,hbe4678,hbe4678,,,0
3073,12459254,14517,6816118,13330,1,100,N,N,N,CP_Units,TT_Task,DT_FixedDUR2,RV_OK,TK_Complete,EK05API050,05A Model Comment Resolution Approval,,,,0,0,0,0,24,0,0,0,,2006-08-24 08:00,2006-09-08 00:00,2007-01-09 08:01,2007-01-09 08:01,,2007-01-27 00:00,2007-01-27 00:00,,,2006-08-24 08:00,2006-08-28 17:00,,,,,PT_Normal,,,,,WsIl0IXEQimm/UA1vm0KRA,b6y03J1kQk6qeb14hLkWjh,,,N,0,0,,,2007-02-01 02:42,2007-02-04 01:05,hbe4678,hbe4678,,,0
3074,12459255,14517,6816118,13330,1,100,N,N,N,CP_Units,TT_Task,DT_FixedDUR2,RV_OK,TK_Complete,EK05BPI030,05B Conceptual Layout - Supersketches,,,,0,0,0,0,80,0,0,0,,2005-06-06 08:00,2006-11-09 00:00,2007-05-08 08:01,2007-05-08 08:01,,2007-01-27 00:00,2007-01-27 00:00,,,2005-06-06 08:00,2005-06-17 17:00,,,,,PT_Normal,,,,,ejWFbKLORpGUj7wSkLWuzA,W7quAUl2bUWM4pMxACAX8x,,,N,0,0,,,2007-02-01 02:42,2007-02-04 01:05,hbe4678,hbe4678,,,0
3075,12459256,14517,6816118,13330,1,0,N,N,N,CP_Units,TT_Task,DT_FixedDUR2,RV_OK,TK_NotStart,EK05BPI050,05B Model Comment Resolution Approval,,600,0,24,0,0,0,24,0,0,0,,,,2007-05-30 08:00,2007-06-01 17:00,,2007-02-14 08:00,2007-02-16 17:00,2007-02-14 08:00,2007-02-16 17:00,2007-02-14 08:00,2007-02-16 17:00,,2007-05-30 08:00,2007-06-01 17:00,,PT_Normal,,,,,Q08nxSwgTSW3BDzcv58KCg,C/l7ta8dl02NAk4vY8GwKR,,,N,0,0,,,2007-02-01 02:42,2007-02-01 02:43,hbe4678,hbe4678,2007-02-14 08:00,2007-02-16 17:00,24
3076,12459257,14517,6816118,13330,1,100,N,N,N,CP_Units,TT_Task,DT_FixedDUR2,RV_OK,TK_Complete,EK050PI006,Site Data Needed - Loading Area (SPDC),,,,0,0,0,0,240,0,0,0,,2006-04-17 08:00,2006-10-31 00:00,2009-02-15 08:01,2009-02-15 08:01,,2007-01-27 00:00,2007-01-27 00:00,,,2006-02-27 08:00,2006-04-07 17:00,,,,,PT_Normal,,,,,NrRqHBk0SNaxJ8LBFgQa+A,WXXkuyEQZEO335xHIJr/6x,,,N,0,0,,,2007-02-01 02:42,2007-02-04 01:05,hbe4678,hbe4678,,,0
3077,12459258,14517,6816118,13330,1,100,N,N,N,CP_Units,TT_Task,DT_FixedDUR2,RV_OK,TK_Complete,EK05BPI035,05B Plot Plan,,,,0,0,0,0,40,0,0,0,,2006-11-09 00:00,2006-11-10 17:00,2007-06-18 08:00,2007-06-18 08:00,,2007-01-27 00:00,2007-01-27 00:00,,,2006-11-10 08:00,2006-11-16 17:00,,,,,PT_Normal,,,,,plUFMdPTQtGHGIdcICcwcg,4BakSdcTAU6IMlUdxAFd/B,,,N,0,0,,,2007-02-01 02:42,2007-02-04 01:05,hbe4678,hbe4678,,,0
3078,12459259,14517,6816118,13330,1,100,N,N,N,CP_Units,TT_Task,DT_FixedDUR2,RV_OK,TK_Complete,EK050PI013,Plot Plan - Dock/Storage Issue IPL,,,,0,0,0,0,320,0,0,0,,2006-02-01 00:00,2006-02-23 00:00,2007-02-07 08:01,2007-02-07 08:01,,2007-01-27 00:00,2007-01-27 00:00,,,2006-04-03 08:00,2006-05-26 17:00,,,,,PT_Normal,,,,,XgRcz79LS1u0m2X5C+CsGw,nDNW5utsOEmBasoFN1xb1h,,,N,0,0,,,2007-02-01 02:42,2007-02-04 01:05,hbe4678,hbe4678,,,0
3079,12459260,14517,6816121,13330,1,100,N,N,N,CP_Units,TT_Task,DT_FixedDUR2,RV_OK,TK_Complete,EK050SY150,050 Relief Valve Calculations - Dock/Storage,,,,0,0,0,0,120,0,0,0,,2005-09-19 08:00,2005-10-26 00:00,2008-01-09 08:01,2008-01-09 08:01,,2007-01-27 00:00,2007-01-27 00:00,,,2005-09-19 08:00,2005-10-07 17:00,,,,,PT_Normal,,,,,3MoiJGo3RHeUleLJF9D7eQ,b+UUMnxnpU2PRjquMnVixB,,,N,0,0,,,2007-02-01 02:42,2007-02-04 01:05,hbe4678,hbe4678,,,0
3080,12459261,14517,6816121,13330,1,100,N,N,N,CP_Units,TT_Task,DT_FixedDUR2,RV_OK,TK_Complete,EK050SY155,050 Issue  Requisition - PSA08 Relief Valves - Dock/Storage,,,,0,0,0,0,40,0,0,0,,2005-11-04 08:01,2005-12-20 00:00,2008-01-23 08:01,2008-01-23 08:01,,2007-01-27 00:00,2007-01-27 00:00,,,2005-11-04 08:01,2005-11-11 08:01,,,,,PT_Normal,,,,,vyc158OvRdGFKQCAtO0DVg,7JN8s1vTFkGM23dQQWVVBx,,,N,0,0,,,2007-02-01 02:43,2007-02-04 01:05,hbe4678,hbe4678,,,0
3081,12459262,14517,6816121,13330,1,100,N,N,N,CP_Units,TT_Task,DT_FixedDUR2,RV_OK,TK_Complete,EK000MF32A,05A MF312  2105-F Water Tank - Process Load Sht.,,,,0,0,0,,80,,0,0,,2005-04-18 08:00,2005-04-26 00:00,2007-01-09 08:01,2007-01-09 08:01,,2007-01-27 00:00,2007-01-27 00:00,,,2005-04-18 08:00,2005-04-29 17:00,,,,,PT_Normal,,,,,kYOFMnBGToOb1IY4zLbrQw,R2LCgbtuMUqq7Dy5befAax,,,N,0,0,,,2007-02-01 02:43,2007-02-04 01:05,hbe4678,hbe4678,,,0
3082,12459263,14517,6816121,13330,1,100,N,N,N,CP_Units,TT_Task,DT_FixedDUR2,RV_OK,TK_Complete,EK050SY020,050 Dock/Storage P&ID development IDR Issue,,,,0,0,0,0,168,0,0,0,,2005-05-06 08:00,2005-05-26 00:00,2007-01-09 08:01,2007-01-09 08:01,,2007-01-27 00:00,2007-01-27 00:00,,,2005-05-06 08:00,2005-06-06 17:00,,,,,PT_Normal,,,,,p0NYXaAYTqKLDF0aC2uwMQ,zrilwGWXxka5Z3aKiUWdgR,,,N,0,0,,,2007-02-01 02:43,2007-02-04 01:05,hbe4678,hbe4678,,,0
3083,12459264,14517,6816121,13330,1,100,N,N,N,CP_Units,TT_Task,DT_FixedDUR2,RV_OK,TK_Complete,EK050SY030,050 Dock/Storage P&ID IDR Meeting milestone,,,,0,0,0,0,16,0,0,0,,2005-06-01 08:00,2005-06-02 17:00,2007-01-09 08:01,2007-01-09 08:01,,2007-01-27 00:00,2007-01-27 00:00,,,2005-06-01 08:00,2005-06-02 17:00,,,,,PT_Normal,,,,,G6aCMUehQfulZvUBzFVuKA,LgcADgILm0aBnzl6qlA9ih,,,N,0,0,,,2007-02-01 02:43,2007-02-04 01:05,hbe4678,hbe4678,,,0
3084,12459265,14517,6816121,13330,1,100,N,N,N,CP_Units,TT_Task,DT_FixedDUR2,RV_OK,TK_Complete,EK050SY040,050 Dock/Storage P&IDs - ICA Issue development,,,,0,0,0,0,272,0,0,0,,2005-06-03 08:00,2005-07-21 00:00,2007-01-09 08:01,2007-01-09 08:01,,2007-01-27 00:00,2007-01-27 00:00,,,2005-06-03 08:00,2005-07-22 17:00,,,,,PT_Normal,,,,,24t8ljwrRvmXtY+Gfol8AA,F0nzOXKgrkeojXf3pJZAmh,,,N,0,0,,,2007-02-01 02:43,2007-02-04 01:05,hbe4678,hbe4678,,,0
3085,12459266,14517,6816121,13330,0,100,N,N,N,CP_Units,TT_FinMile,DT_FixedDUR2,RV_OK,TK_Complete,EK050SY050,050 Dock/Storage P&IDs - ICA Issue Milestone,,,,0,0,0,0,0,0,0,0,,2005-07-21 00:00,2005-07-21 00:00,2007-01-09 08:01,2007-01-09 08:01,,2007-01-27 00:00,2007-01-27 00:00,,,2005-07-22 17:00,2005-07-22 17:00,,,,,PT_Normal,,,,,pS6DTWjeTt+PpwJgAALfCQ,YdjISTCxsUajPhTKVt9Zyx,,,N,0,0,,,2007-02-01 02:43,2007-02-04 01:05,hbe4678,hbe4678,,,0
3086,12459267,14517,6816121,13330,1,100,N,N,N,CP_Units,TT_Task,DT_FixedDUR2,RV_OK,TK_Complete,EK050SY060,050 Dock/Storage P&ID's - IPL Issue Development,,,,0,0,0,0,560,0,0,0,,2005-07-25 08:00,2005-11-11 00:00,2007-01-09 08:01,2007-01-09 08:01,,2007-01-27 00:00,2007-01-27 00:00,,,2005-07-25 08:00,2005-10-28 17:00,,,,,PT_Normal,,,,,irFPxPXYSkqnssAFmjFYEQ,STDYtwqeWkio8Z5wa/JKYh,,,N,0,0,,,2007-02-01 02:43,2007-02-04 01:05,hbe4678,hbe4678,,,0
3087,12459268,14517,6816121,13330,0,100,N,N,N,CP_Units,TT_FinMile,DT_FixedDUR2,RV_OK,TK_Complete,EK050SY090,050 Dock/Storage P&IDs IPL Issue Milestone,,,,0,0,0,0,0,0,0,0,,2005-11-11 00:00,2005-11-11 00:00,2007-01-09 08:01,2007-01-09 08:01,,2007-01-27 00:00,2007-01-27 00:00,,,2005-12-09 17:00,2005-12-09 17:00,,,,,PT_Normal,,,,,RgXnZf2wR3KdhezlBvbhJA,Qdmc4f2rnEOEon9mSDcTex,,,N,0,0,,,2007-02-01 02:43,2007-02-04 01:05,hbe4678,hbe4678,,,0
3088,12459269,14517,6816121,13330,0,100,N,N,N,CP_Units,TT_FinMile,DT_FixedDUR2,RV_OK,TK_Complete,EK05ASY170,05A OSBL P&IDs IPL & Line List Issue Milestone,,,,0,0,0,0,0,0,0,0,,2005-11-11 00:00,2005-11-11 00:00,2007-01-09 08:01,2007-01-09 08:01,,2007-01-27 00:00,2007-01-27 00:00,,,2005-12-09 17:00,2005-12-09 17:00,,,,,PT_Normal,,,,,XwuJ0RofRIqpFaSWNM5lhA,vdGBBOJsHEqH0r0DJU4zUB,,,N,0,0,,,2007-02-01 02:43,2007-02-04 01:05,hbe4678,hbe4678,,,0
3089,12459270,14517,6816121,13330,0,100,N,N,N,CP_Units,TT_FinMile,DT_FixedDUR2,RV_OK,TK_Complete,EK05BSY170,05B OSBL P&IDs IPL & Line List Issue Milestone,,,,0,0,0,0,0,0,0,0,,2005-11-11 00:00,2005-11-11 00:00,2007-05-14 08:00,2007-05-14 08:00,,2007-01-27 00:00,2007-01-27 00:00,,,2005-12-09 17:00,2005-12-09 17:00,,,,,PT_Normal,,,,,obHRnRRkT2mFU9jqIc5Bbw,jb5i6j3l4UqRM8wkbUQVXR,,,N,0,0,,,2007-02-01 02:43,2007-02-04 01:05,hbe4678,hbe4678,,,0
3090,12459271,14517,6816121,13330,1,100,N,N,N,CP_Units,TT_Task,DT_FixedDUR2,RV_OK,TK_Complete,EK050SY135,050 Dock/Storage CV & FE Process Data,,,,0,0,0,0,120,0,0,0,,2005-09-01 00:00,2005-09-15 00:00,2007-01-09 08:01,2007-01-09 08:01,,2007-01-27 00:00,2007-01-27 00:00,,,2005-10-03 08:00,2005-10-21 17:00,,,,,PT_Normal,,,,,QO5aUgPDQt6MSQ3245/hng,mjomlTx1s0Ov0cgGpaOS+B,,,N,0,0,,,2007-02-01 02:43,2007-02-04 01:05,hbe4678,hbe4678,,,0
3091,12459272,14517,6816121,13330,1,100,N,N,N,CP_Units,TT_Task,DT_FixedDUR2,RV_OK,TK_Complete,EK050SY185,050 SP Item Data Sheets - Dock/Storage,,,,0,0,0,0,80,0,0,0,,2005-10-25 08:00,2006-01-24 00:00,2008-01-09 08:01,2008-01-09 08:01,,2007-01-27 00:00,2007-01-27 00:00,,,2005-10-25 08:00,2005-11-07 17:00,,,,,PT_Normal,,,,,lMbAxW1CTO69IKVE2jDyHQ,dDGs3WjkwEOpfibOoNjDih,,,N,0,0,,,2007-02-01 02:43,2007-02-04 01:05,hbe4678,hbe4678,,,0
3092,12459273,14517,6816127,13330,0,100,N,N,N,CP_Units,TT_FinMile,DT_FixedDrtn,RV_OK,TK_Complete,EK000CV146,Receive Site Survey Data Areas 04 & 05,,,,0,0,0,0,0,0,0,0,,2006-08-25 00:00,2006-08-25 00:00,2007-01-09 08:01,2007-01-09 08:01,,2007-01-27 00:00,2007-01-27 00:00,,,2006-09-04 08:01,2006-09-04 08:01,,,,,PT_Normal,,,,,YkDInicXSV6tiBjDahf83g,4qrDEW4hV0aI1X08vq9e/h,,,N,0,0,,,2007-02-01 02:43,2007-02-04 01:05,hbe4678,hbe4678,,,0
3093,12459274,14517,6816127,13330,1,0,N,N,N,CP_Units,TT_Task,DT_FixedDUR2,RV_OK,TK_Active,EK05ACV200,05A Redesign Piling & Ammonia Tank Foundations,,-351.983333333333,0,80,0,0,0,400,0,0,0,,2006-12-04 00:00,,2006-11-28 08:01,2006-12-12 08:01,2007-02-09 17:00,2007-01-29 08:00,2007-02-09 17:00,2007-01-29 08:00,2007-02-09 17:00,2007-01-15 08:00,2007-03-23 17:00,,2006-11-28 08:01,2006-12-12 08:01,,PT_Normal,,,,,9RkKNmSwTwijx/VJyBD5sg,7lkedEC7L0q/u/wEZQNyww,,,N,0,0,,,2007-02-01 02:43,2007-02-04 01:00,hbe4678,hbe4678,2007-01-29 08:00,2007-02-09 17:00,80
3094,12459275,14517,6816128,4047,1,100,N,N,N,CP_Drtn,TT_Task,DT_FixedDUR2,RV_OK,TK_Complete,EK05BELED0,Substation Building Layout,,,,0,0,0,0,8,0,0,0,,2006-01-28 00:00,2006-01-30 17:00,2007-05-08 08:01,2007-05-08 08:01,,2007-01-27 00:00,2007-01-27 00:00,,,2006-01-30 08:00,2006-01-30 17:00,,,,,PT_Normal,,,,,FfDMCArYRNSwahHaWhoMVg,,,,N,0,0,,,2007-02-01 02:43,2007-02-04 01:05,hbe4678,hbe4678,,,0
3095,12459276,14517,6816128,13330,1,100,N,N,N,CP_Units,TT_Task,DT_FixedDUR2,RV_OK,TK_Complete,EK05BEL150,Switchgear One line diagrams - ICA Dock,,,,0,0,0,,640,,0,0,,2005-03-14 08:00,2005-12-15 17:00,2008-03-18 08:01,2008-03-18 08:01,,2007-01-27 00:00,2007-01-27 00:00,,,2005-03-14 08:00,2005-07-06 17:00,,,,,PT_Normal,,,,,Bsko8WNmQuGUNITkmO/1lQ,YrZZYQG/kUWtsPQMdhp8CR,,,N,0,0,,,2007-02-01 02:43,2007-02-04 01:05,hbe4678,hbe4678,,,0
3096,12459277,14517,6816128,13330,1,100,N,N,N,CP_Units,TT_Task,DT_FixedDUR2,RV_OK,TK_Complete,EK05BEL155,Client Review of Switchgear Oneline Diagrams,,,,0,0,0,0,80,0,0,0,,2005-12-15 00:00,2005-12-23 00:00,2008-03-18 08:01,2008-03-18 08:01,,2007-01-27 00:00,2007-01-27 00:00,,,2005-12-16 08:00,2005-12-30 17:00,,,,,PT_Normal,,,,,NoYSI/BaQZWX4gvM07S2gw,/KVr6HGog0qBeQMiTZMKSR,,,N,0,0,,,2007-02-01 02:43,2007-02-04 01:05,hbe4678,hbe4678,,,0
3097,12459278,14517,6816128,13330,1,100,N,N,N,CP_Units,TT_Task,DT_FixedDUR2,RV_OK,TK_Complete,EK05BEL160,Switchgear One line Diagrams - IFD,,,,0,0,0,0,400,0,0,0,,2006-05-04 08:00,2006-09-08 17:00,2008-03-18 08:01,2008-03-18 08:01,,2007-01-27 00:00,2007-01-27 00:00,,,2006-05-04 08:00,2006-07-12 17:00,,,,,PT_Normal,,,,,Qe+CuLenRpeNS7xURFHjrQ,JCRvs1XNJkaf4CQNCi8ttR,,,N,0,0,,,2007-02-01 02:43,2007-02-04 01:05,hbe4678,hbe4678,,,0
3098,12459279,14517,6816128,13330,1,0,N,N,N,CP_Units,TT_Task,DT_FixedDUR2,RV_OK,TK_NotStart,EK05BEL165,Switchgear One line Diagrams - IFC,,2208.01666666667,0,32,0,0,0,128,0,0,0,,,,2008-03-18 08:01,2008-03-24 08:01,,2007-02-26 08:00,2007-03-01 17:00,2007-02-26 08:00,2007-03-01 17:00,2007-02-26 08:00,2007-03-19 17:00,,2008-03-18 08:01,2008-03-24 08:01,,PT_Normal,,,,,VDd9vfWcTYaL4s4hKBHd3g,7lTr7bAX506ja2YnJuCp9h,,,N,0,0,,,2007-02-01 02:43,2007-02-04 01:00,hbe4678,hbe4678,2007-02-26 08:00,2007-03-01 17:00,32
3099,12459280,14517,6816128,13330,1,100,N,N,N,CP_Units,TT_Task,DT_FixedDUR2,RV_OK,TK_Complete,EK05BEL170,MCC One line diagrams - ICA Dock,,,,0,0,0,,640,,0,0,,2005-03-14 08:00,2005-12-23 00:00,2008-04-01 08:00,2008-04-01 08:00,,2007-01-27 00:00,2007-01-27 00:00,,,2005-03-14 08:00,2005-07-06 17:00,,,,,PT_Normal,,,,,7Sl27DCnTyyd/0XILEHszw,KkMwyL3xxk6XEM1zl3J6lx,,,N,0,0,,,2007-02-01 02:43,2007-02-04 01:05,hbe4678,hbe4678,,,0
3100,12459281,14517,6816128,13330,1,100,N,N,N,CP_Units,TT_Task,DT_FixedDUR2,RV_OK,TK_Complete,EK05BEL175,Client Review of MCC Oneline Diagrams,,,,0,0,0,0,80,0,0,0,,2005-12-12 00:00,2005-12-23 00:00,2008-04-01 08:00,2008-04-01 08:00,,2007-01-27 00:00,2007-01-27 00:00,,,2006-01-06 08:00,2006-01-19 17:00,,,,,PT_Normal,,,,,jf4VIJciTj+PRMHi67BoXg,Fn35V+XaXkWMDNY9iyLn+h,,,N,0,0,,,2007-02-01 02:43,2007-02-04 01:05,hbe4678,hbe4678,,,0
3101,12459282,14517,6816128,13330,1,100,N,N,N,CP_Units,TT_Task,DT_FixedDUR2,RV_OK,TK_Complete,EK05BEL180,MCC One line Diagrams - IFD,,,,0,0,0,0,400,0,0,0,,2006-05-04 08:00,2006-09-08 17:00,2008-04-01 08:00,2008-04-01 08:00,,2007-01-27 00:00,2007-01-27 00:00,,,2006-05-04 08:00,2006-07-12 17:00,,,,,PT_Normal,,,,,94mN+TsBRXmJCfLMkMbrhQ,1ADF1PIDoUyT4b3ZvKZfKB,,,N,0,0,,,2007-02-01 02:43,2007-02-04 01:05,hbe4678,hbe4678,,,0
3102,12459283,14517,6816128,13330,1,0,N,N,N,CP_Units,TT_Task,DT_FixedDUR2,RV_OK,TK_NotStart,EK05BEL185,MCC One line Diagrams - IFC,,2288,1312.01666666667,32,0,0,0,128,0,0,0,,,,2008-04-01 08:00,2008-04-04 17:00,,2007-02-26 08:00,2007-03-01 17:00,2007-02-26 08:00,2007-03-01 17:00,2007-02-26 08:00,2007-03-19 17:00,,2008-04-01 08:00,2008-04-04 17:00,,PT_Normal,,,,,HL0lBHoTS0eZjXsyD99x2g,P082EoBdiUuhG6Rxu/j/OB,,,N,0,0,,,2007-02-01 02:43,2007-02-04 01:00,hbe4678,hbe4678,2007-02-26 08:00,2007-03-01 17:00,32
3103,12459284,14517,6816132,13330,1,100,N,N,N,CP_Units,TT_Task,DT_FixedDUR2,RV_OK,TK_Complete,EK05AIC120,05A Instrument Detail Model / Review,,,,0,0,0,0,480,0,0,0,,2006-05-22 08:00,2006-09-21 17:00,2007-07-09 08:00,2007-07-09 08:00,,2007-01-27 00:00,2007-01-27 00:00,,,2006-05-22 08:00,2006-08-11 17:00,,,,,PT_Normal,,,,,pn5oNSvuSVOAcVYQ/ZBBOw,svo20hKNykKOjJYwt9gpcB,,,N,0,0,,,2007-02-01 02:43,2007-02-04 01:05,hbe4678,hbe4678,,,0
3104,12459285,14517,6816132,13330,1,0,N,N,N,CP_Units,TT_Task,DT_FixedDUR2,RV_OK,TK_Active,EK05BIC120,05B Instrument Model,,880,0,0,0,0,0,360,0,0,0,2006-12-04 00:00,2007-01-05 08:00,,2007-06-29 17:00,2007-06-29 17:00,2007-01-26 17:00,2007-01-29 08:00,2007-01-29 08:00,2007-01-29 08:00,2007-01-29 08:00,2007-01-05 08:00,2007-03-08 17:00,,2007-06-29 17:00,2007-06-29 17:00,CS_MSOA,PT_Normal,,,,,NTaN3wcqSIGDVHZ/O6ITEg,EOvNjNctK0+hlCWcLmGPdB,,,N,0,0,,,2007-02-01 02:43,2007-02-01 02:43,hbe4678,hbe4678,2007-01-29 08:00,2007-01-29 08:00,0
3105,12459286,14517,6816132,13330,1,100,N,N,N,CP_Units,TT_Task,DT_FixedDUR2,RV_OK,TK_Complete,EK050I1100,050 Orific Plates - D/S Dock/Storage Area,,,,0,0,0,0,120,0,0,0,,2005-11-03 08:00,2005-12-05 17:00,2007-01-09 08:01,2007-01-09 08:01,,2007-01-27 00:00,2007-01-27 00:00,,,2005-11-03 08:00,2005-11-23 17:00,,,,,PT_Normal,,,,,LLNzQ+dhR8204vcb6L1GKA,ikWbUUdjkEa6tXfakqGYQR,,,N,0,0,,,2007-02-01 02:43,2007-02-04 01:05,hbe4678,hbe4678,,,0
3106,12459287,14517,6816132,13330,1,100,N,N,N,CP_Units,TT_Task,DT_FixedDUR2,RV_OK,TK_Complete,EK050I1105,050 Orific Plates - Purchase ERW Dock/Storage Area,,,,0,0,0,0,40,0,0,0,,2006-01-30 08:00,2006-04-11 00:00,2009-02-15 08:01,2009-02-15 08:01,,2007-01-27 00:00,2007-01-27 00:00,,,2006-01-30 08:00,2006-02-03 17:00,,,,,PT_Normal,,,,,j9sEBvk6RqOA7fkRrfzFqA,9Wq5iqO1dkeygli6maIw/x,,,N,0,0,,,2007-02-01 02:43,2007-02-04 01:05,hbe4678,hbe4678,,,0
3107,12459288,14517,6816132,13330,1,100,N,N,N,CP_Units,TT_Task,DT_FixedDUR2,RV_OK,TK_Complete,EK05AIC300,05A In Line Instrument Approved Vendor Data,,,,0,0,0,0,160,0,0,0,,2006-02-01 00:00,2006-06-28 00:00,2007-03-05 08:00,2007-03-05 08:00,,2007-01-27 00:00,2007-01-27 00:00,,,2005-11-03 08:00,2005-11-30 17:00,,,,,PT_Normal,,,,,ylUnf2ejTlmrdxqecQxLbw,kudvcqlu/UKzQlHbqaOmZQ,,,N,0,0,,,2007-02-01 02:43,2007-02-04 01:05,hbe4678,hbe4678,,,0
3108,12459289,14517,6816132,13330,1,100,N,N,N,CP_Units,TT_Task,DT_FixedDUR2,RV_OK,TK_Complete,EK05BIC300,05B In Line Instrument Approved Vendor Data,,,,0,0,0,0,160,0,0,0,,2006-02-01 00:00,2006-06-19 00:00,2007-06-15 17:00,2007-06-15 17:00,,2007-01-27 00:00,2007-01-27 00:00,,,2005-11-03 08:00,2005-11-30 17:00,,,,,PT_Normal,,,,,0PkyvZgBSqW0FcNfOLypSw,kudvcqlu/UKzQlHbqaOmZQ,,,N,0,0,,,2007-02-01 02:43,2007-02-04 01:05,hbe4678,hbe4678,,,0
3109,12459290,14517,6816133,4047,1,100,N,N,N,CP_Drtn,TT_Task,DT_FixedDUR2,RV_OK,TK_Complete,PK05AMB46,05A MB710  2202-B/BL - Piping Prod. V. Data,,,,0,0,0,0,280,0,0,0,,2006-05-01 08:00,2006-06-26 17:00,2007-03-05 08:00,2007-03-05 08:00,,2007-01-27 00:00,2007-01-27 00:00,,,2006-05-01 08:00,2006-06-16 17:00,,,,,PT_Normal,,,,,VtFNK70HQ/yPfg/He5wi3A,psJi5NTJEEqpag9aUNDg3w,,,N,0,0,,,2007-02-01 02:43,2007-02-04 01:05,hbe4678,hbe4678,,,0
3110,12459291,14517,6816133,4047,1,100,N,N,N,CP_Drtn,TT_Task,DT_FixedDUR2,RV_OK,TK_Complete,PK05AMB47,05A MB710  2202-B/BL - Civil Prod. V. Data,,,,0,0,0,0,280,0,0,0,,2006-05-01 08:00,2006-06-26 17:00,2007-02-07 08:01,2007-02-07 08:01,,2007-01-27 00:00,2007-01-27 00:00,,,2006-05-01 08:00,2006-06-16 17:00,,,,,PT_Normal,,,,,fvmiNAMPSc6Q4ni1yYmj4A,psJi5NTJEEqpag9aUNDg3w,,,N,0,0,,,2007-02-01 02:43,2007-02-04 01:05,hbe4678,hbe4678,,,0
3111,12459292,14517,6816133,4047,1,100,N,N,N,CP_Drtn,TT_Task,DT_FixedDUR2,RV_OK,TK_Complete,PK05AMB48,05A MB710  2202-B/BL - E&I Prod. V. Data,,,,0,0,0,0,280,0,0,0,,2006-05-01 08:00,2006-06-26 17:00,2009-01-13 08:00,2009-01-13 08:00,,2007-01-27 00:00,2007-01-27 00:00,,,2006-05-01 08:00,2006-06-16 17:00,,,,,PT_Normal,,,,,jRRz/AvwSWi1fgypsEhMQA,psJi5NTJEEqpag9aUNDg3w,,,N,0,0,,,2007-02-01 02:43,2007-02-04 01:05,hbe4678,hbe4678,,,0
3112,12459293,14517,6816141,4047,1,100,N,N,N,CP_Drtn,TT_Task,DT_FixedDUR2,RV_OK,TK_Complete,PK000EL000,OSBL Motors & Drivers - Prod. V. Data (Information Only),,,,0,0,0,0,488,0,0,0,,2006-01-30 00:00,2006-10-27 00:00,2009-01-13 08:00,2009-01-13 08:00,,2007-01-29 08:00,2007-01-29 08:00,,,2006-04-24 08:00,2006-07-17 17:00,,,,,PT_Normal,,,,,7wLXMceISgKhADfciNSITg,ysrCh5oj8UqTZP5IqyLDvQ,,,N,0,0,,,2007-02-01 02:43,2007-02-04 01:05,hbe4678,hbe4678,,,0
3113,12459294,14517,6816141,13330,1,100,N,N,N,CP_Units,TT_Task,DT_FixedDUR2,RV_OK,TK_Complete,PK000E001M,Sub Stations - Production V. Data,,,,0,0,0,0,160,0,0,0,,2006-09-28 08:00,2006-10-31 00:00,2007-03-27 08:01,2007-03-27 08:01,,2007-01-27 00:00,2007-01-27 00:00,,,2006-09-28 08:00,2006-10-25 17:00,,,,,PT_Normal,,,,,3ZAh3WPTTY6G+Pzu/oALGQ,,,,N,0,0,,,2007-02-01 02:43,2007-02-04 01:05,hbe4678,hbe4678,,,0
3114,12459295,14517,6816141,13330,1,100,N,N,N,CP_Units,TT_Task,DT_FixedDUR2,RV_OK,TK_Complete,PK000E002M,Transformer - Production V. Data,,,,0,0,0,0,160,0,0,0,,2006-09-28 08:00,2006-10-31 00:00,2007-03-27 08:01,2007-03-27 08:01,,2007-01-27 00:00,2007-01-27 00:00,,,2006-09-28 08:00,2006-10-25 17:00,,,,,PT_Normal,,,,,px9dgv53RdaaFxW+Drf5kg,,,,N,0,0,,,2007-02-01 02:43,2007-02-04 01:05,hbe4678,hbe4678,,,0
3115,12459296,14517,6816141,13330,1,100,N,N,N,CP_Units,TT_Task,DT_FixedDUR2,RV_OK,TK_Complete,PK010E008L,540-SG Admin. Area Pwr Supply - Production V. Data,,,,0,0,0,0,280,0,0,0,,2006-12-04 00:00,2006-12-08 00:00,2007-06-20 08:01,2007-06-20 08:01,,2007-01-27 00:00,2007-01-27 00:00,,,2006-12-18 08:01,2007-02-05 08:01,,,,,PT_Normal,,,,,5+F07CjWR/Cc1g2nyRSU0A,0dV8Gk2ROU2qpb+aM02aqQ,,,N,0,0,,,2007-02-01 02:43,2007-02-04 01:05,hbe4678,hbe4678,,,0
3116,12459297,14517,6816141,13330,1,100,N,N,N,CP_Units,TT_Task,DT_FixedDUR2,RV_OK,TK_Complete,PK000E004M,UPS System - Production V. Data,,,,0,0,0,0,160,0,0,0,,2006-11-10 08:00,2006-11-17 00:00,2007-03-27 08:01,2007-03-27 08:01,,2007-01-27 00:00,2007-01-27 00:00,,,2006-11-10 08:00,2006-12-07 17:00,,,,,PT_Normal,,,,,aXqxog/tQUWtWVxcaYsfIg,4DiYP7PxhUuxa7X+N13FNw,,,N,0,0,,,2007-02-01 02:43,2007-02-04 01:05,hbe4678,hbe4678,,,0
3117,12459298,14517,6816145,13330,1,100,N,N,N,CP_Units,TT_Task,DT_FixedDUR2,RV_OK,TK_Complete,EK010IC213,010 Control Valves - Purchase ERW,,,,0,0,0,0,40,0,0,0,,2006-01-25 00:00,2006-07-07 17:00,2009-02-13 17:00,2009-02-13 17:00,,2007-01-27 00:00,2007-01-27 00:00,,,2006-01-31 08:00,2006-02-06 17:00,,,,,PT_Normal,,,,,s/4isU4uSTCUAd9riwYgiA,n8lmGXKB40mmWeKsonBJ0h,,,N,0,0,,,2007-02-01 02:43,2007-02-04 01:05,hbe4678,hbe4678,,,0
3118,12459299,14517,6816145,13330,1,100,N,N,N,CP_Units,TT_Task,DT_FixedDUR2,RV_OK,TK_Complete,EK010IC242,"MOV Valves - D/S,Sizing,Tech Eval",,,,0,0,0,0,120,0,0,0,,2005-10-25 08:00,2005-12-15 17:00,2007-03-13 08:00,2007-03-13 08:00,,2007-01-27 00:00,2007-01-27 00:00,,,2005-10-25 08:00,2005-11-14 17:00,,,,,PT_Normal,,,,,CuEhebcZRvy2Cx5OBPoTzA,AASNRe29B0W+eq3S1YkgPx,,,N,0,0,,,2007-02-01 02:43,2007-02-04 01:05,hbe4678,hbe4678,,,0
3119,12459300,14517,6816145,13330,1,100,N,N,N,CP_Units,TT_Task,DT_FixedDUR2,RV_OK,TK_Complete,EK010IC252,MOV Valves - Purchase ERW,,,,0,0,0,0,40,0,0,0,,2006-02-27 08:00,2006-05-15 17:00,2008-11-24 08:00,2008-11-24 08:00,,2007-01-27 00:00,2007-01-27 00:00,,,2006-02-27 08:00,2006-03-03 17:00,,,,,PT_Normal,,,,,zu7QoORVQiqI3zmmL75p5A,Nuf5kKqelUCe5i+GfzGBaB,,,N,0,0,,,2007-02-01 02:43,2007-02-04 01:05,hbe4678,hbe4678,,,0
3120,12459301,14517,6816145,13330,1,100,N,N,N,CP_Units,TT_Task,DT_FixedDUR2,RV_OK,TK_Complete,EK030I611A,Develop / Issue Purchase ERW - Pressure Gauges - OSBL,,,,0,0,0,0,320,0,0,0,,2006-05-22 08:00,2006-08-09 00:00,2007-04-19 08:00,2007-04-19 08:00,,2007-01-27 00:00,2007-01-27 00:00,,,2006-05-22 08:00,2006-07-14 17:00,,,,,PT_Normal,,,,,ZUVkBThtTR2NysFH+Y2OhA,Ncr5SykSNk62Ygpwt4psNx,,,N,0,0,,,2007-02-01 02:43,2007-02-04 01:05,hbe4678,hbe4678,,,0
3121,12459302,14517,6816145,13330,1,100,N,N,N,CP_Units,TT_Task,DT_FixedDUR2,RV_OK,TK_Complete,EK030I616A,Develop / Issue Purchase ERW - Steam Drum Lvl Gauges - OSBL,,,,0,0,0,0,288,0,0,0,,2006-04-21 08:00,2006-06-12 17:00,2007-07-23 08:00,2007-07-23 08:00,,2007-01-27 00:00,2007-01-27 00:00,,,2006-04-21 08:00,2006-06-09 17:00,,,,,PT_Normal,,,,,CNkzpUKCSDiZij2eT5DoYA,1G4nNbJWNkueUFeOL3fURx,,,N,0,0,,,2007-02-01 02:43,2007-02-04 01:05,hbe4678,hbe4678,,,0
3122,12459303,14517,6816145,13330,1,100,N,N,N,CP_Units,TT_Task,DT_FixedDUR2,RV_OK,TK_Complete,EK030I621A,Develop / Issue Purchase ERW - Temperature Elements - OSBL,,,,0,0,0,0,288,0,0,0,,2006-05-08 08:00,2006-07-24 08:00,2007-07-23 08:00,2007-07-23 08:00,,2007-01-27 00:00,2007-01-27 00:00,,,2006-05-08 08:00,2006-06-26 17:00,,,,,PT_Normal,,,,,bSyow6AERrmQeCDDHCJajA,PhHF5Kx2hEi+7nQlj9KlBx,,,N,0,0,,,2007-02-01 02:43,2007-02-04 01:05,hbe4678,hbe4678,,,0
3123,12459304,14517,6816145,13330,1,100,N,N,N,CP_Units,TT_Task,DT_FixedDUR2,RV_OK,TK_Complete,EK030I623A,Develop / Issue Purchase ERW -Multi-Point Thermocouples - OSBL,,,,0,0,0,0,288,0,0,0,,2006-05-01 08:00,2006-06-26 17:00,2007-07-23 08:00,2007-07-23 08:00,,2007-01-27 00:00,2007-01-27 00:00,,,2006-05-01 08:00,2006-06-19 17:00,,,,,PT_Normal,,,,,Eoeaeqe4Tnyrq6WIWa7Lrw,wJaXa/Zy9UWRoZmQyPsoXx,,,N,0,0,,,2007-02-01 02:43,2007-02-04 01:05,hbe4678,hbe4678,,,0
3124,12459305,14517,6816145,13330,1,100,N,N,N,CP_Units,TT_Task,DT_FixedDUR2,RV_OK,TK_Complete,EK01AIC300,01A In Line Instrument Approved Vendor Data,,,,0,0,0,0,160,0,0,0,,2006-02-01 00:00,2006-06-19 00:00,2007-07-09 08:00,2007-07-09 08:00,,2007-01-27 00:00,2007-01-27 00:00,,,2005-11-03 08:00,2005-11-30 17:00,,,,,PT_Normal,,,,,geJeJQ9ITR2eLjd6s9HxrA,Y7tKvvVtNEWuLAXkVuB8Hx,,,N,0,0,,,2007-02-01 02:43,2007-02-04 01:05,hbe4678,hbe4678,,,0
3125,12459306,14517,6816145,13330,1,100,N,N,N,CP_Units,TT_Task,DT_FixedDUR2,RV_OK,TK_Complete,EK01BIC300,01B In Line Instrument Approved Vendor Data,,,,0,0,0,0,160,0,0,0,,2006-02-01 00:00,2006-06-09 17:00,2007-05-07 08:00,2007-05-07 08:00,,2007-01-27 00:00,2007-01-27 00:00,,,2005-11-03 08:00,2005-11-30 17:00,,,,,PT_Normal,,,,,ZVhwM61XR7KwvCfh1zqdtg,fLE7aUew4kmUrBdhD+SG9Q,,,N,0,0,,,2007-02-01 02:43,2007-02-04 01:05,hbe4678,hbe4678,,,0
3126,12459307,14517,6816145,13330,1,100,N,N,N,CP_Units,TT_Task,DT_FixedDUR2,RV_OK,TK_Complete,EK01CIC300,01C In Line Instrument Approved Vendor Data,,,,0,0,0,0,160,0,0,0,,2006-02-01 00:00,2006-06-09 00:00,2007-05-31 08:01,2007-05-31 08:01,,2007-01-27 00:00,2007-01-27 00:00,,,2005-11-03 08:00,2005-11-30 17:00,,,,,PT_Normal,,,,,fibEwn2pScGjHgXXgGyDiA,fLE7aUew4kmUrBdhD+SG9Q,,,N,0,0,,,2007-02-01 02:43,2007-02-04 01:05,hbe4678,hbe4678,,,0
3127,12459308,14517,6816145,13330,1,100,N,N,N,CP_Units,TT_Task,DT_FixedDUR2,RV_OK,TK_Complete,EK01DIC300,01D In Line Instrument Approved Vendor Data,,,,0,0,0,0,160,0,0,0,,2006-02-01 00:00,2006-06-20 00:00,2007-05-16 08:01,2007-05-16 08:01,,2007-01-27 00:00,2007-01-27 00:00,,,2005-11-03 08:00,2005-11-30 17:00,,,,,PT_Normal,,,,,UfKU81diSc22Bw7uMgmruA,MG1d3+oFSk6OSP5lqjuyNw,,,N,0,0,,,2007-02-01 02:43,2007-02-04 01:05,hbe4678,hbe4678,,,0
3128,12459309,14517,6816145,13330,1,100,N,N,N,CP_Units,TT_Task,DT_FixedDUR2,RV_OK,TK_Complete,EK01JIC300,01J In Line Instrument Approved Vendor Data,,,,0,0,0,0,160,0,0,0,,2006-02-01 00:00,2006-05-15 17:00,2007-07-09 08:00,2007-07-09 08:00,,2007-01-27 00:00,2007-01-27 00:00,,,2005-11-03 08:00,2005-11-30 17:00,,,,,PT_Normal,,,,,fSBg12pYSla4nSDPrBcvmg,fLE7aUew4kmUrBdhD+SG9Q,,,N,0,0,,,2007-02-01 02:43,2007-02-04 01:05,hbe4678,hbe4678,,,0
3129,12459310,14517,6816145,13330,1,100,N,N,N,CP_Units,TT_Task,DT_FixedDUR2,RV_OK,TK_Complete,EK01YIC300,01Y In Line Instrument Approved Vendor Data,,,,0,0,0,0,160,0,0,0,,2006-02-01 00:00,2006-06-06 17:00,2007-03-13 08:00,2007-03-13 08:00,,2007-01-27 00:00,2007-01-27 00:00,,,2005-11-03 08:00,2005-11-30 17:00,,,,,PT_Normal,,,,,dA9uv6nwTVaDWCu4lrqwFQ,gArG5nAnUECC701VxWQz9w,,,N,0,0,,,2007-02-01 02:43,2007-02-04 01:05,hbe4678,hbe4678,,,0
3130,12459311,14517,6816145,13330,1,100,N,N,N,CP_Units,TT_Task,DT_FixedDUR2,RV_OK,TK_Complete,EK01BIC120,01B Instrument Detail Model / Review,,,,0,0,0,0,280,0,0,0,,2006-06-19 08:00,2006-07-20 00:00,2007-07-09 08:00,2007-07-09 08:00,,2007-01-27 00:00,2007-01-27 00:00,,,2006-06-19 08:00,2006-08-04 17:00,,,,,PT_Normal,,,,,OAXtMTxZQWuGhnA1V3BTiQ,frUKSc65hkONPEOupadiXR,,,N,0,0,,,2007-02-01 02:43,2007-02-04 01:05,hbe4678,hbe4678,,,0
3131,12459312,14517,6816145,13330,1,100,N,N,N,CP_Units,TT_Task,DT_FixedDUR2,RV_OK,TK_Complete,EK01CIC120,01C Instrument Detail Model / Review,,,,0,0,0,0,240,0,0,0,,2006-06-19 00:00,2006-11-14 17:00,2007-07-09 08:00,2007-07-09 08:00,,2007-01-27 00:00,2007-01-27 00:00,,,2006-07-10 08:00,2006-08-18 17:00,,,,,PT_Normal,,,,,Py/uOlfATRuGtbmkDybI7g,eJQ0HM3W1EC+8XNJlDE5eB,,,N,0,0,,,2007-02-01 02:43,2007-02-04 01:05,hbe4678,hbe4678,,,0
3132,12459313,14517,6816145,13330,1,100,N,N,N,CP_Units,TT_Task,DT_FixedDUR2,RV_OK,TK_Complete,EK01DIC120,01D Instrument Detail Model / Review,,,,0,0,0,0,320,0,0,0,,2006-06-19 08:00,2006-08-14 17:00,2007-07-09 08:00,2007-07-09 08:00,,2007-01-27 00:00,2007-01-27 00:00,,,2006-06-19 08:00,2006-08-11 17:00,,,,,PT_Normal,,,,,DVmcFAnCRd24qQX/lMJxcQ,e4Nwi4b4/UChOaT+zwAYeB,,,N,0,0,,,2007-02-01 02:43,2007-02-04 01:05,hbe4678,hbe4678,,,0
3133,12459314,14517,6816145,13330,1,100,N,N,N,CP_Units,TT_Task,DT_FixedDUR2,RV_OK,TK_Complete,EK01EIC120,01E Instrument Detail Model / Review,,,,0,0,0,0,120,0,0,0,,2006-03-13 08:00,2006-03-31 17:00,2007-07-09 08:00,2007-07-09 08:00,,2007-01-27 00:00,2007-01-27 00:00,,,2006-03-13 08:00,2006-03-31 17:00,,,,,PT_Normal,,,,,vkbsOL8cTm++kerEpjp87g,zGgng8WbdUq3uPEvayKDmx,,,N,0,0,,,2007-02-01 02:43,2007-02-04 01:05,hbe4678,hbe4678,,,0
3134,12459315,14517,6816145,13330,1,100,N,N,N,CP_Units,TT_Task,DT_FixedDUR2,RV_OK,TK_Complete,EK01HIC120,01H Instrument Detail Model / Review,,,,0,0,0,0,200,0,0,0,,2006-11-09 08:00,2006-11-14 00:00,2009-02-13 17:00,2009-02-13 17:00,,2007-01-27 00:00,2007-01-27 00:00,,,2006-11-09 08:00,2006-12-13 17:00,,,,,PT_Normal,,,,,wkLcS8NCTHmA2CT2dABYTg,eZbP0Bdps0Kpp3/f+YmIoR,,,N,0,0,,,2007-02-01 02:43,2007-02-04 01:05,hbe4678,hbe4678,,,0
3135,12459316,14517,6816145,13330,1,100,N,N,N,CP_Units,TT_Task,DT_FixedDUR2,RV_OK,TK_Complete,EK01JIC120,01J Instrument Detail Model / Review,,,,0,0,0,0,120,0,0,0,,2006-07-03 08:00,2006-07-20 00:00,2007-07-09 08:00,2007-07-09 08:00,,2007-01-27 00:00,2007-01-27 00:00,,,2006-07-03 08:00,2006-07-21 17:00,,,,,PT_Normal,,,,,davWyqyWRuSxjPUfPQ1nyw,loN1IOmYeEC1lgG0kIjHbR,,,N,0,0,,,2007-02-01 02:43,2007-02-04 01:05,hbe4678,hbe4678,,,0
3136,12459317,14517,6816145,13330,1,100,N,N,N,CP_Units,TT_Task,DT_FixedDUR2,RV_OK,TK_Complete,EK01YIC120,01Y Instrument Detail Model / Review,,,,0,0,0,0,160,0,0,0,,2006-05-01 08:00,2006-05-10 17:00,2007-07-09 08:00,2007-07-09 08:00,,2007-01-27 00:00,2007-01-27 00:00,,,2006-05-01 08:00,2006-05-26 17:00,,,,,PT_Normal,,,,,XPFkVE+wShquBa/3MScGyQ,dn7KEpTMOUiBnBoR+qfcEx,,,N,0,0,,,2007-02-01 02:43,2007-02-04 01:05,hbe4678,hbe4678,,,0
3137,12459318,14517,6816145,13330,1,100,N,N,N,CP_Units,TT_Task,DT_FixedDUR2,RV_OK,TK_Complete,EK010I1240,"Rotameters - D/S,Sizing,Tech Eval",,,,0,0,0,0,120,0,0,0,,2005-10-24 00:00,2005-12-16 00:00,2007-03-13 08:00,2007-03-13 08:00,,2007-01-27 00:00,2007-01-27 00:00,,,2005-10-31 08:00,2005-11-18 17:00,,,,,PT_Normal,,,,,6gexrycKSCu/5iqzQqn8tA,0nweaqcS+kqHKGnhIbBLaB,,,N,0,0,,,2007-02-01 02:43,2007-02-04 01:05,hbe4678,hbe4678,,,0
3138,12459319,14517,6816145,13330,1,100,N,N,N,CP_Units,TT_Task,DT_FixedDUR2,RV_OK,TK_Complete,EK010I1241,Rotameters - Purchase ERW,,,,0,0,0,0,40,0,0,0,,2006-02-27 08:00,2006-08-21 17:00,2009-01-29 08:00,2009-01-29 08:00,,2007-01-27 00:00,2007-01-27 00:00,,,2006-02-27 08:00,2006-03-03 17:00,,,,,PT_Normal,,,,,4xMvXCuuQ3OruzJr16D+2Q,bb2nA00xk0qO9AqWPpNmCx,,,N,0,0,,,2007-02-01 02:43,2007-02-04 01:05,hbe4678,hbe4678,,,0
3139,12459320,14517,6816145,13330,1,100,N,N,N,CP_Units,TT_Task,DT_FixedDUR2,RV_OK,TK_Complete,EK030I131A,Develop / Issue Purchase ERW -Transmitter OSBL,,,,0,0,0,0,296,0,0,0,,2006-04-03 08:00,2006-07-13 00:00,2007-05-08 08:00,2007-05-08 08:00,,2007-01-27 00:00,2007-01-27 00:00,,,2006-04-03 08:00,2006-05-23 17:00,,,,,PT_Normal,,,,,EOTa/RPjQ4y+onqDK6uiJQ,MK3+EQghykarvjeRRAekeh,,,N,0,0,,,2007-02-01 02:43,2007-02-04 01:05,hbe4678,hbe4678,,,0
3140,12459321,14517,6816145,13330,1,100,N,N,N,CP_Units,TT_Task,DT_FixedDUR2,RV_OK,TK_Complete,EK010I1100,"010 Orific Plates - D/S,Sizing,Tech Eval",,,,0,0,0,0,120,0,0,0,,2005-11-03 08:00,2005-11-23 17:00,2007-01-09 08:01,2007-01-09 08:01,,2007-01-27 00:00,2007-01-27 00:00,,,2005-11-03 08:00,2005-11-23 17:00,,,,,PT_Normal,,,,,AZNgCjQCRPmeXvSn2/2ufQ,11nDiLjWsEyJfXeARwVlxh,,,N,0,0,,,2007-02-01 02:43,2007-02-04 01:05,hbe4678,hbe4678,,,0
3141,12459322,14517,6816145,13330,1,100,N,N,N,CP_Units,TT_Task,DT_FixedDUR2,RV_OK,TK_Complete,EK010I1105,010 Orific Plates - Purchase ERW,,,,0,0,0,0,40,0,0,0,,2006-01-30 08:00,2006-04-11 00:00,2009-02-15 08:01,2009-02-15 08:01,,2007-01-27 00:00,2007-01-27 00:00,,,2006-01-30 08:00,2006-02-03 17:00,,,,,PT_Normal,,,,,eDmF9cyBQwWqQQ1sK1Cagw,AeXEcK1nMk6fcucQW2pvuh,,,N,0,0,,,2007-02-01 02:43,2007-02-04 01:05,hbe4678,hbe4678,,,0
3142,12459323,14517,6816145,13330,1,100,N,N,N,CP_Units,TT_Task,DT_FixedDUR2,RV_OK,TK_Complete,EK010I1150,"Annubars - D/S,Sizing,Tech Eval",,,,0,0,0,0,120,0,0,0,,2005-11-03 08:00,2005-12-02 17:00,2007-03-13 08:00,2007-03-13 08:00,,2007-01-27 00:00,2007-01-27 00:00,,,2005-11-03 08:00,2005-11-23 17:00,,,,,PT_Normal,,,,,pFJk9cRJSNWYASyzV4Op/g,r/hlynxBvEaX847+PaXpBx,,,N,0,0,,,2007-02-01 02:43,2007-02-04 01:05,hbe4678,hbe4678,,,0
3143,12459324,14517,6816145,13330,1,100,N,N,N,CP_Units,TT_Task,DT_FixedDUR2,RV_OK,TK_Complete,EK010I1151,Annubars - Purchase ERW,,,,0,0,0,0,40,0,0,0,,2006-05-01 08:00,2006-06-20 00:00,2009-01-09 08:00,2009-01-09 08:00,,2007-01-27 00:00,2007-01-27 00:00,,,2006-05-01 08:00,2006-05-05 17:00,,,,,PT_Normal,,,,,XpOkbSVATlqVG5Yg7oLMFg,LFV0QfLpjkaERP2gmDIZxB,,,N,0,0,,,2007-02-01 02:43,2007-02-04 01:05,hbe4678,hbe4678,,,0
3144,12459325,14517,6816145,13330,1,100,N,N,N,CP_Units,TT_Task,DT_FixedDUR2,RV_OK,TK_Complete,EK010I1210,"Vortex Meters - D/S,Sizing,Tech Eval",,,,0,0,0,0,120,0,0,0,,2005-11-03 08:00,2005-12-02 17:00,2007-03-13 08:00,2007-03-13 08:00,,2007-01-27 00:00,2007-01-27 00:00,,,2005-11-03 08:00,2005-11-23 17:00,,,,,PT_Normal,,,,,WSLjgS6YS0q+GwFIkYlIPA,IQLxQ/Zi70ibEqTOgVLaWh,,,N,0,0,,,2007-02-01 02:43,2007-02-04 01:05,hbe4678,hbe4678,,,0
3145,12459326,14517,6816145,13330,1,100,N,N,N,CP_Units,TT_Task,DT_FixedDUR2,RV_OK,TK_Complete,EK010I1211,Vortex Meters - Purchase ERW,,,,0,0,0,0,40,0,0,0,,2006-04-10 08:00,2006-06-02 00:00,2009-02-12 08:00,2009-02-12 08:00,,2007-01-27 00:00,2007-01-27 00:00,,,2006-04-10 08:00,2006-04-14 17:00,,,,,PT_Normal,,,,,Kzfm7hnsRnWtNRgcWzlkmw,MTklX1M0BEGFoJSBCm2+GR,,,N,0,0,,,2007-02-01 02:43,2007-02-04 01:05,hbe4678,hbe4678,,,0
3146,12459327,14517,6816145,13330,1,100,N,N,N,CP_Units,TT_Task,DT_FixedDUR2,RV_OK,TK_Complete,EK010IC210,"010 Control Valves - D/S,Sizing,Tech Eval",,,,0,0,0,0,120,0,0,0,,2005-11-03 08:00,2006-01-20 17:00,2007-03-13 08:00,2007-03-13 08:00,,2007-01-27 00:00,2007-01-27 00:00,,,2005-11-03 08:00,2005-11-23 17:00,,,,,PT_Normal,,,,,qUlXXLM8TKWOwIrE7AqEkQ,2oqGWowGbUKYUArbZEZb2R,,,N,0,0,,,2007-02-01 02:43,2007-02-04 01:05,hbe4678,hbe4678,,,0
3147,12459328,14517,6816145,13330,1,100,N,N,N,CP_Units,TT_Task,DT_FixedDUR2,RV_OK,TK_Complete,EK01AIC120,01A Instrument Detail Model / Review,,,,0,0,0,0,400,0,0,0,,2006-06-19 08:00,2006-06-20 00:00,2007-07-09 08:00,2007-07-09 08:00,,2007-01-27 00:00,2007-01-27 00:00,,,2006-06-19 08:00,2006-08-25 17:00,,,,,PT_Normal,,,,,mqZ8VxzGQKi/MYsa7kl8cw,chVCZ+46ikeV612nB69YCB,,,N,0,0,,,2007-02-01 02:43,2007-02-04 01:05,hbe4678,hbe4678,,,0
3148,12459329,14517,6816148,4047,1,100,N,N,N,CP_Drtn,TT_Task,DT_FixedDUR2,RV_OK,TK_Complete,PK01BMF01,01B MF302  2001-FA/FB Water Tank - Fdn. V. Data (Subcontract),,,,0,0,0,0,280,0,0,0,,2006-02-27 08:00,2006-03-24 00:00,2007-02-06 08:01,2007-02-06 08:01,,2007-01-27 00:00,2007-01-27 00:00,,,2006-02-27 08:00,2006-04-14 17:00,,,,,PT_Normal,,,,,uOFitHVsT+Sd3RYEHkX4Tg,,,,N,0,0,,,2007-02-01 02:43,2007-02-04 01:05,hbe4678,hbe4678,,,0
3149,12459330,14517,6816148,4047,1,100,N,N,N,CP_Drtn,TT_Task,DT_FixedDUR2,RV_OK,TK_Complete,PK01BMF02,01B MF302  2001-FA/FB Water Tank - Prod. V. Data (Subcontract),,,,0,0,0,0,280,0,0,0,,2006-02-27 08:00,2006-06-30 17:00,2007-05-07 08:00,2007-05-07 08:00,,2007-01-27 00:00,2007-01-27 00:00,,,2006-02-27 08:00,2006-04-14 17:00,,,,,PT_Normal,,,,,cGoVJEszToqM9s9AibOZSg,,,,N,0,0,,,2007-02-01 02:43,2007-02-04 01:05,hbe4678,hbe4678,,,0
3150,12459331,14517,6816148,4047,1,100,N,N,N,CP_Drtn,TT_Task,DT_FixedDUR2,RV_OK,TK_Complete,PK01BMF03,01B MF302  2001-FA/FB Water Tank - Piping Prod. V. Data (Subcontract),,,,0,0,0,0,280,0,0,0,,2006-02-27 08:00,2006-06-30 17:00,2007-05-07 08:00,2007-05-07 08:00,,2007-01-27 00:00,2007-01-27 00:00,,,2006-02-27 08:00,2006-04-14 17:00,,,,,PT_Normal,,,,,PegkCTlNT4+UPVytH4UBzg,FS2Ui9+plk2O6VHrfcm1kw,,,N,0,0,,,2007-02-01 02:43,2007-02-04 01:05,hbe4678,hbe4678,,,0
3151,12459332,14517,6816148,4047,1,100,N,N,N,CP_Drtn,TT_Task,DT_FixedDUR2,RV_OK,TK_Complete,PK01BMF04,01B MF302  2001-FA/FB Water Tank - Civil Prod. V. Data (Subcontract),,,,0,0,0,0,280,0,0,0,,2006-02-27 08:00,2006-06-30 17:00,2007-05-07 08:00,2007-05-07 08:00,,2007-01-27 00:00,2007-01-27 00:00,,,2006-02-27 08:00,2006-04-14 17:00,,,,,PT_Normal,,,,,6MH1dkwqTSmyuY1QvaQapg,FS2Ui9+plk2O6VHrfcm1kw,,,N,0,0,,,2007-02-01 02:43,2007-02-04 01:05,hbe4678,hbe4678,,,0
3152,12459333,14517,6816148,4047,1,100,N,N,N,CP_Drtn,TT_Task,DT_FixedDUR2,RV_OK,TK_Complete,PK01BMF05,01B MF302  2001-FA/FB Water Tank - E&I Prod. V. Data (Subcontract),,,,0,0,0,0,280,0,0,0,,2006-02-27 08:00,2006-06-30 17:00,2007-05-07 08:00,2007-05-07 08:00,,2007-01-27 00:00,2007-01-27 00:00,,,2006-02-27 08:00,2006-04-14 17:00,,,,,PT_Normal,,,,,aDuz9y5DRbWl7QEkdg4QAw,FS2Ui9+plk2O6VHrfcm1kw,,,N,0,0,,,2007-02-01 02:43,2007-02-04 01:05,hbe4678,hbe4678,,,0
3153,12459334,14517,6816149,4047,1,100,N,N,N,CP_Drtn,TT_Task,DT_FixedDUR2,RV_OK,TK_Complete,PK01EMUV03,01E MU221  Warehouse / Maintenance Area - E&I Prod. V. Data,,,,0,0,0,0,280,0,0,0,,2006-01-30 08:00,2006-01-30 17:00,2007-07-08 17:00,2007-07-08 17:00,,2007-01-27 00:00,2007-01-27 00:00,,,2006-01-30 08:00,2006-03-17 17:00,,,,,PT_Normal,,,,,pL8YucZFQeatcghRyGLPSQ,QtKVAZE8aEW9rx6hs3BTng,,,N,0,0,,,2007-02-01 02:43,2007-02-04 01:05,hbe4678,hbe4678,,,0
3154,12459335,14517,6816149,4047,1,100,N,N,N,CP_Drtn,TT_Task,DT_FixedDUR2,RV_OK,TK_Complete,PK01BMJV01,"01B MJ305  2001-JA/JB/JC, 2004-J/JA,2007-J/JA,2007-J/JA - Piping Prod. V. Data",,,,0,0,0,0,280,0,0,0,,2006-01-30 08:00,2006-05-01 00:00,2007-05-07 08:00,2007-05-07 08:00,,2007-01-27 00:00,2007-01-27 00:00,,,2006-01-30 08:00,2006-03-17 17:00,,,,,PT_Normal,,,,,bYhuQEkYSMeZ8QNklbgzKA,Os5XFs/FK0WzdWCJwI7TQA,,,N,0,0,,,2007-02-01 02:43,2007-02-04 01:05,hbe4678,hbe4678,,,0
3155,12459336,14517,6816149,4047,1,100,N,N,N,CP_Drtn,TT_Task,DT_FixedDUR2,RV_OK,TK_Complete,PK01BMJV02,"01B MJ305  2001-JA/JB/JC, 2004-J/JA,2007-J/JA,2007-J/JA - Civil Prod. V. Data",,,,0,0,0,0,280,0,0,0,,2006-01-30 08:00,2006-04-21 00:00,2007-05-07 08:00,2007-05-07 08:00,,2007-01-27 00:00,2007-01-27 00:00,,,2006-01-30 08:00,2006-03-17 17:00,,,,,PT_Normal,,,,,+hqS3hQzSHuL6FoRMhJo1A,Os5XFs/FK0WzdWCJwI7TQA,,,N,0,0,,,2007-02-01 02:43,2007-02-04 01:05,hbe4678,hbe4678,,,0
3156,12459337,14517,6816149,4047,1,100,N,N,N,CP_Drtn,TT_Task,DT_FixedDUR2,RV_OK,TK_Complete,PK01BMJV03,"01B MJ305  2001-JA/JB/JC, 2004-J/JA,2007-J/JA,2007-J/JA - E&I Prod. V. Data",,,,0,0,0,0,280,0,0,0,,2006-01-30 08:00,2006-06-07 00:00,2007-05-07 08:00,2007-05-07 08:00,,2007-01-27 00:00,2007-01-27 00:00,,,2006-01-30 08:00,2006-03-17 17:00,,,,,PT_Normal,,,,,wuM/C4huRtC9XIH5Xkec8w,Os5XFs/FK0WzdWCJwI7TQA,,,N,0,0,,,2007-02-01 02:43,2007-02-04 01:05,hbe4678,hbe4678,,,0
3157,12459338,14517,6816149,4047,1,100,N,N,N,CP_Drtn,TT_Task,DT_FixedDUR2,RV_OK,TK_Complete,PK01AMLV01,"01A ML900  2408-LA,LB,LC,LD - Piping Prod. V. Data",,,,0,0,0,0,280,0,0,0,,2006-05-03 00:00,2006-06-01 00:00,2007-05-07 08:00,2007-05-07 08:00,,2007-01-27 00:00,2007-01-27 00:00,,,2006-05-01 08:00,2006-06-16 17:00,,,,,PT_Normal,,,,,05Y349kdSiesYvziTNtHPw,fl6WDTXNbES2U1xESw1WwA,,,N,0,0,,,2007-02-01 02:43,2007-02-04 01:05,hbe4678,hbe4678,,,0
3158,12459339,14517,6816149,4047,1,100,N,N,N,CP_Drtn,TT_Task,DT_FixedDUR2,RV_OK,TK_Complete,PK01AMLV02,"01A ML900  2408-LA,LB,LC,LD - Civil Prod. V. Data",,,,0,0,0,0,280,0,0,0,,2006-05-03 00:00,2006-06-01 00:00,2007-09-04 08:01,2007-09-04 08:01,,2007-01-27 00:00,2007-01-27 00:00,,,2006-05-01 08:00,2006-06-16 17:00,,,,,PT_Normal,,,,,wyle3cldS1q96D6kI4MFvQ,fl6WDTXNbES2U1xESw1WwA,,,N,0,0,,,2007-02-01 02:43,2007-02-04 01:05,hbe4678,hbe4678,,,0
3159,12459340,14517,6816149,4047,1,100,N,N,N,CP_Drtn,TT_Task,DT_FixedDUR2,RV_OK,TK_Complete,PK01AMLV03,"01A ML900  2408-LA,LB,LC,LD - E&I Prod. V. Data",,,,0,0,0,0,280,0,0,0,,2006-05-03 00:00,2006-09-11 00:00,2009-01-13 08:00,2009-01-13 08:00,,2007-01-27 00:00,2007-01-27 00:00,,,2006-05-01 08:00,2006-06-16 17:00,,,,,PT_Normal,,,,,PSREAihqRcSUdZRkvJ8FQg,fl6WDTXNbES2U1xESw1WwA,,,N,0,0,,,2007-02-01 02:43,2007-02-04 01:05,hbe4678,hbe4678,,,0
3160,12459341,14517,6816149,4047,1,100,N,N,N,CP_Drtn,TT_Task,DT_FixedDUR2,RV_OK,TK_Complete,PK01BMJV04,01B MJ391  2204-J/JA - Piping Prod. V. Data,,,,0,0,0,0,280,0,0,0,,2006-04-17 08:00,2006-06-09 00:00,2007-05-07 08:00,2007-05-07 08:00,,2007-01-27 00:00,2007-01-27 00:00,,,2006-04-17 08:00,2006-06-02 17:00,,,,,PT_Normal,,,,,MKBEaJXGRvKWmUBxj3Xh/A,Sst+O31Bgk+uWSwXnVrZ6g,,,N,0,0,,,2007-02-01 02:43,2007-02-04 01:05,hbe4678,hbe4678,,,0
3161,12459342,14517,6816149,4047,1,100,N,N,N,CP_Drtn,TT_Task,DT_FixedDUR2,RV_OK,TK_Complete,PK01BMJV05,01B MJ391  2204-J/JA - Civil Prod. V. Data,,,,0,0,0,0,280,0,0,0,,2006-04-17 08:00,2006-06-09 00:00,2007-07-08 08:00,2007-07-08 08:00,,2007-01-27 00:00,2007-01-27 00:00,,,2006-04-17 08:00,2006-06-02 17:00,,,,,PT_Normal,,,,,Ho6z8JzYQvyx5Z+qOW0nlw,Sst+O31Bgk+uWSwXnVrZ6g,,,N,0,0,,,2007-02-01 02:43,2007-02-04 01:05,hbe4678,hbe4678,,,0
3162,12459343,14517,6816149,4047,1,100,N,N,N,CP_Drtn,TT_Task,DT_FixedDUR2,RV_OK,TK_Complete,PK01BMJV06,01B MJ391  2204-J/JA - E&I Prod. V. Data,,,,0,0,0,0,280,0,0,0,,2006-04-17 08:00,2006-10-06 17:00,2009-01-13 08:00,2009-01-13 08:00,,2007-01-27 00:00,2007-01-27 00:00,,,2006-04-17 08:00,2006-06-02 17:00,,,,,PT_Normal,,,,,B6rrL7UBRzyqkHllDtCAmg,dQoRhddxbk6y9w4NQ5lnQg,,,N,0,0,,,2007-02-01 02:43,2007-02-04 01:05,hbe4678,hbe4678,,,0
3163,12459344,14517,6816149,4047,1,100,N,N,N,CP_Drtn,TT_Task,DT_FixedDUR2,RV_OK,TK_Complete,PK01AMJV01,01A MJ308  2408-JA/JB - Piping Prod. V. Data,,,,0,0,0,0,320,0,0,0,,2006-05-24 00:00,2006-07-25 00:00,2007-07-09 08:00,2007-07-09 08:00,,2007-01-27 00:00,2007-01-27 00:00,,,2006-05-22 08:00,2006-07-14 17:00,,,,,PT_Normal,,,,,U/7eTFpHQdGNzTeR2uUAIQ,U39c8rZ1y0KnoGhDT6MBTA,,,N,0,0,,,2007-02-01 02:43,2007-02-04 01:05,hbe4678,hbe4678,,,0
3164,12459345,14517,6816149,4047,1,100,N,N,N,CP_Drtn,TT_Task,DT_FixedDUR2,RV_OK,TK_Complete,PK01AMJV02,01A MJ308  2408-JA/JB - Civil Prod. V. Data,,,,0,0,0,0,320,0,0,0,,2006-05-24 00:00,2006-08-14 00:00,2007-07-09 08:00,2007-07-09 08:00,,2007-01-27 00:00,2007-01-27 00:00,,,2006-05-22 08:00,2006-07-14 17:00,,,,,PT_Normal,,,,,ZvWTsZEoSayK78/wxIqsqA,U39c8rZ1y0KnoGhDT6MBTA,,,N,0,0,,,2007-02-01 02:43,2007-02-04 01:05,hbe4678,hbe4678,,,0
3165,12459346,14517,6816149,4047,1,100,N,N,N,CP_Drtn,TT_Task,DT_FixedDUR2,RV_OK,TK_Complete,PK01AMJV03,01A MJ308  2408-JA/JB - E&I Prod. V. Data,,,,0,0,0,0,320,0,0,0,,2006-05-24 00:00,2006-08-14 00:00,2009-01-13 08:00,2009-01-13 08:00,,2007-01-27 00:00,2007-01-27 00:00,,,2006-05-22 08:00,2006-07-14 17:00,,,,,PT_Normal,,,,,Tibl3potTBeAPvJdWjKQkg,TDXA+fVPEESqea0PAI3Fiw,,,N,0,0,,,2007-02-01 02:43,2007-02-04 01:05,hbe4678,hbe4678,,,0
3166,12459347,14517,6816149,4047,1,100,N,N,N,CP_Drtn,TT_Task,DT_FixedDUR2,RV_OK,TK_Complete,PK01DMJV01,01D MJ303  2202-JA/JB/JC - Civil Prod. V. Data,,,,0,0,0,0,280,0,0,0,,2006-02-03 00:00,2006-04-06 17:00,2007-04-08 08:01,2007-04-08 08:01,,2007-01-27 00:00,2007-01-27 00:00,,,2006-01-30 08:00,2006-03-17 17:00,,,,,PT_Normal,,,,,n/gu0cJuQRGd5P2t97kj9w,IJcebqHE3kaBE4yaplsiWg,,,N,0,0,,,2007-02-01 02:43,2007-02-04 01:05,hbe4678,hbe4678,,,0
3167,12459348,14517,6816149,4047,1,100,N,N,N,CP_Drtn,TT_Task,DT_FixedDUR2,RV_OK,TK_Complete,PK01DMJV02,01D MJ303  2202-JA/JB/JC - Piping Prod. V. Data,,,,0,0,0,0,280,0,0,0,,2006-02-03 00:00,2006-04-06 17:00,2007-05-16 08:01,2007-05-16 08:01,,2007-01-27 00:00,2007-01-27 00:00,,,2006-01-30 08:00,2006-03-17 17:00,,,,,PT_Normal,,,,,m6TPiqySTm26j/tzW/daEQ,IJcebqHE3kaBE4yaplsiWg,,,N,0,0,,,2007-02-01 02:43,2007-02-04 01:05,hbe4678,hbe4678,,,0
3168,12459349,14517,6816149,4047,1,100,N,N,N,CP_Drtn,TT_Task,DT_FixedDUR2,RV_OK,TK_Complete,PK01DMJV03,01D MJ303  2202-JA/JB/JC - E&I Prod. V. Data,,,,0,0,0,0,280,0,0,0,,2006-02-03 08:00,2006-07-18 00:00,2009-01-13 08:00,2009-01-13 08:00,,2007-01-27 00:00,2007-01-27 00:00,,,2006-02-03 08:00,2006-03-23 17:00,,,,,PT_Normal,,,,,F1R5bit/RsGavSeKOHZPSw,PvSEr+9lBE6TVGWFl0vdfA,,,N,0,0,,,2007-02-01 02:43,2007-02-04 01:05,hbe4678,hbe4678,,,0
3169,12459350,14517,6816149,13330,1,100,N,N,N,CP_Units,TT_Task,DT_FixedDUR2,RV_OK,TK_Complete,PK01FMU100,"01F Recv. Planning V. Data - Utility Equip. 2603-K, 2607-K",,,,0,0,0,0,40,0,0,0,,2005-12-02 00:00,2005-12-16 00:00,2009-02-15 08:01,2009-02-15 08:01,,2007-01-27 00:00,2007-01-27 00:00,,,2005-12-29 08:00,2006-01-05 17:00,,,,,PT_Normal,,,,,P/EOnz6eQLyZkulysvJ03w,z5kx+qZYaUOVzniVnq5P9x,,,N,0,0,,,2007-02-01 02:43,2007-02-04 01:05,hbe4678,hbe4678,,,0
3170,12459351,14517,6816149,13330,1,100,N,N,N,CP_Units,TT_Task,DT_FixedDUR2,RV_OK,TK_Complete,PK01BMJ154,"01B Recv. Planning V. Data - Pumps (2001,4,7,2203,4)",,,,0,0,0,0,8,0,0,0,,2005-10-28 00:00,2005-10-28 00:00,2007-05-07 08:00,2007-05-07 08:00,,2007-01-27 00:00,2007-01-27 00:00,,,2006-01-05 08:00,2006-01-05 17:00,,,,,PT_Normal,,,,,1++uwFcWRciAxualH3kidg,pvZ89q4juEOsYjCTM/MP1B,,,N,0,0,,,2007-02-01 02:43,2007-02-04 01:05,hbe4678,hbe4678,,,0
3171,12459352,14517,6816149,13330,1,100,N,N,N,CP_Units,TT_Task,DT_FixedDUR2,RV_OK,TK_Complete,PK01BMU100,01B Recv. Planning V. Data - 2007-L (No Req.),,,,0,0,0,0,8,0,0,0,,2006-02-10 00:00,2006-02-10 00:00,2007-05-07 08:00,2007-05-07 08:00,,2007-01-27 00:00,2007-01-27 00:00,,,2006-02-27 08:00,2006-02-27 17:00,,,,,PT_Normal,,,,,9z5Wz4XpRSyKfW5Cz+GDbQ,SEGdxpmCAE+1yZ/bj1/nrR,,,N,0,0,,,2007-02-01 02:43,2007-02-04 01:05,hbe4678,hbe4678,,,0
3172,12459353,14517,6816149,13330,1,100,N,N,N,CP_Units,TT_Task,DT_FixedDUR2,RV_OK,TK_Complete,PK01DMJ154,01D Recv. Planning V. Data - Pumps 2210-J,,,,0,0,0,0,8,0,0,0,,2006-01-26 00:00,2006-01-26 00:00,2007-04-08 08:01,2007-04-08 08:01,,2007-01-27 00:00,2007-01-27 00:00,,,2006-01-30 08:00,2006-01-30 17:00,,,,,PT_Normal,,,,,H/Z3iW8STSOjREXlL67pKg,IkY7cjocwUi8bmVF6uFoHh,,,N,0,0,,,2007-02-01 02:43,2007-02-04 01:05,hbe4678,hbe4678,,,0
3173,12459354,14517,6816149,13330,1,100,N,N,N,CP_Units,TT_Task,DT_FixedDUR2,RV_OK,TK_Complete,PK01HMJ135,01H Recv. Planning V.Data - Emerg Pwr Generator,,,,0,0,0,0,8,0,0,0,,2005-10-31 08:00,2005-10-31 17:00,2007-06-06 08:01,2007-06-06 08:01,,2007-01-27 00:00,2007-01-27 00:00,,,2005-10-31 08:00,2005-10-31 17:00,,,,,PT_Normal,,,,,ZsAp4NbyQ1CsN8XX2h+SXA,0pVqKnDb2EC5hbSYRJHeex,,,N,0,0,,,2007-02-01 02:43,2007-02-04 01:05,hbe4678,hbe4678,,,0
3174,12459355,14517,6816149,4047,1,100,N,N,N,CP_Drtn,TT_Task,DT_FixedDUR2,RV_OK,TK_Complete,PK01DMUV09,"01D MU322  2210-L,2211-L - E&I Prod. V. Data",,,,0,0,0,0,280,0,0,0,,2006-05-01 00:00,2006-06-26 00:00,2009-01-13 08:00,2009-01-13 08:00,,2007-01-27 00:00,2007-01-27 00:00,,,2006-05-09 08:00,2006-06-26 17:00,,,,,PT_Normal,,,,,IAKLMeY6Tpyj39eFuDzuog,aS1LzxWRj0uF3VWui7cDVA,,,N,0,0,,,2007-02-01 02:43,2007-02-04 01:05,hbe4678,hbe4678,,,0
3175,12459356,14517,6816149,4047,1,100,N,N,N,CP_Drtn,TT_Task,DT_FixedDUR2,RV_OK,TK_Complete,PK01DMUV07,"01D MU322  2210-L,2211-L - Piping Prod. V. Data",,,,0,0,0,0,280,0,0,0,,2006-05-01 00:00,2006-06-20 00:00,2007-05-16 08:01,2007-05-16 08:01,,2007-01-27 00:00,2007-01-27 00:00,,,2006-05-09 08:00,2006-06-26 17:00,,,,,PT_Normal,,,,,cY6XexboRyOBgyHzlpEfdA,aS1LzxWRj0uF3VWui7cDVA,,,N,0,0,,,2007-02-01 02:43,2007-02-04 01:05,hbe4678,hbe4678,,,0
3176,12459357,14517,6816149,4047,1,100,N,N,N,CP_Drtn,TT_Task,DT_FixedDUR2,RV_OK,TK_Complete,PK01DMUV08,"01D MU322  2210-L,2211-L - Civil Prod. V. Data",,,,0,0,0,0,280,0,0,0,,2006-05-01 00:00,2006-05-02 00:00,2007-04-08 08:01,2007-04-08 08:01,,2007-01-27 00:00,2007-01-27 00:00,,,2006-05-09 08:00,2006-06-26 17:00,,,,,PT_Normal,,,,,tLHi4O/eRYiO6MjehsEq5w,P1WZ2QbHmkCiAG/XxYS6lw,,,N,0,0,,,2007-02-01 02:43,2007-02-04 01:05,hbe4678,hbe4678,,,0
3177,12459358,14517,6816149,4047,1,100,N,N,N,CP_Drtn,TT_Task,DT_FixedDUR2,RV_OK,TK_Complete,PK01CMUV01,01C MU300  2102-U - Piping Prod. V. Data,,,,0,0,0,0,280,0,0,0,,2006-02-16 00:00,2006-09-05 00:00,2007-05-31 08:01,2007-05-31 08:01,,2007-01-27 00:00,2007-01-27 00:00,,,2006-01-30 08:00,2006-03-17 17:00,,,,,PT_Normal,,,,,Ymo3O14tSqep0/QPj+sWtg,er1kX9bvmEqlHNo04JSz/g,,,N,0,0,,,2007-02-01 02:43,2007-02-04 01:05,hbe4678,hbe4678,,,0
3178,12459359,14517,6816149,4047,1,100,N,N,N,CP_Drtn,TT_Task,DT_FixedDUR2,RV_OK,TK_Complete,PK01CMUV02,01C MU300  2102-U - Civil Prod. V. Data,,,,0,0,0,0,280,0,0,0,,2006-02-16 00:00,2006-09-25 00:00,2007-06-12 08:01,2007-06-12 08:01,,2007-01-27 00:00,2007-01-27 00:00,,,2006-01-30 08:00,2006-03-17 17:00,,,,,PT_Normal,,,,,ke1mRO6pQ7e3p6Bi4Iofqg,er1kX9bvmEqlHNo04JSz/g,,,N,0,0,,,2007-02-01 02:43,2007-02-04 01:05,hbe4678,hbe4678,,,0
3179,12459360,14517,6816149,4047,1,100,N,N,N,CP_Drtn,TT_Task,DT_FixedDUR2,RV_OK,TK_Complete,PK01CMUV03,01C MU300  2102-U - E&I Prod. V. Data,,,,0,0,0,0,280,0,0,0,,2006-02-16 00:00,2006-08-15 00:00,2009-01-13 08:00,2009-01-13 08:00,,2007-01-27 00:00,2007-01-27 00:00,,,2006-01-30 08:00,2006-03-17 17:00,,,,,PT_Normal,,,,,M7RuYVWEQ32IvLdB/1SZEw,er1kX9bvmEqlHNo04JSz/g,,,N,0,0,,,2007-02-01 02:43,2007-02-04 01:05,hbe4678,hbe4678,,,0
3180,12459361,14517,6816149,4047,1,100,N,N,N,CP_Drtn,TT_Task,DT_FixedDUR2,RV_OK,TK_Complete,PK01DMUV01,"01D MU310  2202-L,2203-L,2203-L,2205-L,2208-L,2212-L-Piping Prod. V. Data",,,,0,0,0,0,280,0,0,0,,2006-02-14 00:00,2006-06-26 17:00,2007-05-16 08:01,2007-05-16 08:01,,2007-01-27 00:00,2007-01-27 00:00,,,2006-03-27 08:00,2006-05-12 17:00,,,,,PT_Normal,,,,,jr+wufVrQQiWBygl6hcUCA,/T5ZGOAMt0OY1K4WnXVVfQ,,,N,0,0,,,2007-02-01 02:43,2007-02-04 01:05,hbe4678,hbe4678,,,0
3181,12459362,14517,6816149,4047,1,100,N,N,N,CP_Drtn,TT_Task,DT_FixedDUR2,RV_OK,TK_Complete,PK01DMUV02,"01D MU310  2202-L,2203-L,2203-L,2205-L,2208-L - Civil Prod. V. Data",,,,0,0,0,0,280,0,0,0,,2006-02-14 00:00,2006-05-01 00:00,2007-04-08 08:01,2007-04-08 08:01,,2007-01-27 00:00,2007-01-27 00:00,,,2006-03-27 08:00,2006-05-12 17:00,,,,,PT_Normal,,,,,AW4BuU+YRbm4gFDLpVN9QA,/T5ZGOAMt0OY1K4WnXVVfQ,,,N,0,0,,,2007-02-01 02:43,2007-02-04 01:05,hbe4678,hbe4678,,,0
3182,12459363,14517,6816149,4047,1,100,N,N,N,CP_Drtn,TT_Task,DT_FixedDUR2,RV_OK,TK_Complete,PK01DMUV03,"01D MU310  2202-L,2203-L,2203-L,2205-L,2208-L,2212-L- E&I Prod. V. Data",,,,0,0,0,0,280,0,0,0,,2006-02-14 00:00,2006-06-26 17:00,2009-01-13 08:00,2009-01-13 08:00,,2007-01-27 00:00,2007-01-27 00:00,,,2006-03-27 08:00,2006-05-12 17:00,,,,,PT_Normal,,,,,QdBWGtfNTiamCtCeruMtdg,/T5ZGOAMt0OY1K4WnXVVfQ,,,N,0,0,,,2007-02-01 02:43,2007-02-04 01:05,hbe4678,hbe4678,,,0
3183,12459364,14517,6816149,4047,1,100,N,N,N,CP_Drtn,TT_Task,DT_FixedDUR2,RV_OK,TK_Complete,PK01DMUV04,01D MU611  2101-U - Piping Prod. V. Data,,,,0,0,0,0,280,0,0,0,,2005-10-04 00:00,2006-04-03 00:00,2007-05-16 08:01,2007-05-16 08:01,,2007-01-27 00:00,2007-01-27 00:00,,,2006-02-27 08:00,2006-04-14 17:00,,,,,PT_Normal,,,,,HSHxku9nT3KZcuF9Few57g,rDTR1l4TwkCArZclQ5y++g,,,N,0,0,,,2007-02-01 02:43,2007-02-04 01:05,hbe4678,hbe4678,,,0
3184,12459365,14517,6816149,4047,1,100,N,N,N,CP_Drtn,TT_Task,DT_FixedDUR2,RV_OK,TK_Complete,PK01DMUV05,01D MU611  2101-U - Civil Prod. V. Data,,,,0,0,0,0,280,0,0,0,,2005-10-04 00:00,2006-04-03 00:00,2007-04-08 08:01,2007-04-08 08:01,,2007-01-27 00:00,2007-01-27 00:00,,,2006-02-27 08:00,2006-04-14 17:00,,,,,PT_Normal,,,,,+Rfef6zWRkadwzardIkp8A,rDTR1l4TwkCArZclQ5y++g,,,N,0,0,,,2007-02-01 02:43,2007-02-04 01:05,hbe4678,hbe4678,,,0
3185,12459366,14517,6816149,4047,1,100,N,N,N,CP_Drtn,TT_Task,DT_FixedDUR2,RV_OK,TK_Complete,PK01DMUV06,01D MU611  2101-U - E&I Prod. V. Data,,,,0,0,0,0,280,0,0,0,,2005-10-04 00:00,2006-04-03 00:00,2009-01-13 08:00,2009-01-13 08:00,,2007-01-27 00:00,2007-01-27 00:00,,,2006-02-27 08:00,2006-04-14 17:00,,,,,PT_Normal,,,,,lFMnNn6zRl6R1QGzPTIo+Q,rDTR1l4TwkCArZclQ5y++g,,,N,0,0,,,2007-02-01 02:43,2007-02-04 01:05,hbe4678,hbe4678,,,0
3186,12459367,14517,6816149,4047,1,100,N,N,N,CP_Drtn,TT_Task,DT_FixedDUR2,RV_OK,TK_Active,PK01HMJV02,01H MJ730  2303-J - E&I Prod. V. Data,,4088,0,0,0,0,0,280,0,0,0,,2006-01-30 08:00,,2009-01-12 17:00,2009-01-12 17:00,2006-11-10 17:00,2007-01-29 08:00,2007-01-29 08:00,2007-01-29 08:00,2007-01-29 08:00,2006-01-30 08:00,2006-03-17 17:00,,2009-01-12 17:00,2009-01-12 17:00,,PT_Normal,,,,,KFejB94ITJCxzY9lMBjfjg,H+z+eq+2dUC8CR0VAro7QA,,,N,0,0,,,2007-02-01 02:43,2007-02-03 00:30,hbe4678,hbe4678,2007-01-29 08:00,2007-01-29 08:00,0
3187,12459368,14517,6816149,4047,1,100,N,N,N,CP_Drtn,TT_Task,DT_FixedDUR2,RV_OK,TK_Complete,PK01HMJV01,01H MJ730  2303-J - Civil Prod. V. Data,,,,0,0,0,0,280,0,0,0,,2006-01-30 08:00,2006-08-14 17:00,2007-06-06 08:01,2007-06-06 08:01,,2007-01-27 00:00,2007-01-27 00:00,,,2006-01-30 08:00,2006-03-17 17:00,,,,,PT_Normal,,,,,93T7SNaUS8ueZqWCmdUwcA,H+z+eq+2dUC8CR0VAro7QA,,,N,0,0,,,2007-02-01 02:43,2007-02-04 01:05,hbe4678,hbe4678,,,0
3188,12459369,14517,6816149,4047,1,100,N,N,N,CP_Drtn,TT_Task,DT_FixedDUR2,RV_OK,TK_Complete,PK01EMUV01,01E MU221  Warehouse / Maintenance Area - Piping Prod. V. Data,,,,0,0,0,0,280,0,0,0,,2006-01-30 08:00,2006-01-30 17:00,2007-07-08 17:00,2007-07-08 17:00,,2007-01-27 00:00,2007-01-27 00:00,,,2006-01-30 08:00,2006-03-17 17:00,,,,,PT_Normal,,,,,FKs+mSG6QBSRWInjOxSnOg,QtKVAZE8aEW9rx6hs3BTng,,,N,0,0,,,2007-02-01 02:43,2007-02-04 01:05,hbe4678,hbe4678,,,0
3189,12459370,14517,6816149,4047,1,100,N,N,N,CP_Drtn,TT_Task,DT_FixedDUR2,RV_OK,TK_Complete,PK01EMUV02,01E MU221  Warehouse / Maintenance Area - Civil Prod. V. Data,,,,0,0,0,0,280,0,0,0,,2006-01-30 08:00,2006-01-30 17:00,2007-07-08 17:00,2007-07-08 17:00,,2007-01-27 00:00,2007-01-27 00:00,,,2006-01-30 08:00,2006-03-17 17:00,,,,,PT_Normal,,,,,sIbTZHVCQCCdQugQ0boN9w,QtKVAZE8aEW9rx6hs3BTng,,,N,0,0,,,2007-02-01 02:43,2007-02-04 01:05,hbe4678,hbe4678,,,0
3190,12459371,14517,6816150,13331,1,100,N,N,N,CP_Units,TT_Task,DT_FixedDUR2,RV_OK,TK_Complete,EK01BPI144,01B OP's & Serv. Model Comments Resolution Approval,,,,0,0,0,0,16,0,0,0,,2006-08-24 08:00,2006-09-25 17:00,2007-05-07 08:00,2007-05-07 08:00,,2007-01-27 00:00,2007-01-27 00:00,,,2006-08-24 08:00,2006-08-25 17:00,,,,,PT_Normal,,,,,RseG65p+Rj6igeV9IGOcBw,D8YmbE87N0ylIUrfG4lEFA,,,N,0,0,,,2007-02-01 02:43,2007-02-04 01:05,hbe4678,hbe4678,,,0
3191,12459372,14517,6816150,13331,1,100,N,N,N,CP_Units,TT_Task,DT_FixedDUR2,RV_OK,TK_Complete,EK01DPI144,01D OP's & Serv. Model Comments Resolution Approval,,,,0,0,0,0,16,0,0,0,,2006-09-25 08:00,2006-12-08 00:00,2007-05-16 08:01,2007-05-16 08:01,,2007-01-27 00:00,2007-01-27 00:00,,,2006-09-25 08:00,2006-09-26 17:00,,,,,PT_Normal,,,,,7jLvnZCMQf28i0GT9+4/hA,fEZE8Ztb6UqMVVXK0/25/A,,,N,0,0,,,2007-02-01 02:43,2007-02-04 01:05,hbe4678,hbe4678,,,0
3192,12459373,14517,6816150,13331,1,100,N,N,N,CP_Units,TT_Task,DT_FixedDUR2,RV_OK,TK_Complete,EK01YPI143,01Y OP's & Serv. Model Comment Resolution Approval,,,,0,0,0,0,40,0,0,0,,2006-06-13 08:00,2006-06-22 00:00,2007-06-12 08:00,2007-06-12 08:00,,2007-01-27 00:00,2007-01-27 00:00,,,2006-06-13 08:00,2006-06-19 17:00,,,,,PT_Normal,,,,,atYPHt0zTsqQRTCdS2vSYA,/H+vHh9iJEG2Ygv1lwJIkB,,,N,0,0,,,2007-02-01 02:43,2007-02-04 01:05,hbe4678,hbe4678,,,0
3193,12459374,14517,6816150,13331,1,100,N,N,N,CP_Units,TT_Task,DT_FixedDUR2,RV_OK,TK_Complete,EK01CPI143,01C OP's & Serv. Model Comment Resolution Approval,,,,0,0,0,0,40,0,0,0,,2006-12-08 08:00,2006-12-08 17:00,2007-06-08 17:00,2007-06-08 17:00,,2007-01-27 00:00,2007-01-27 00:00,,,2006-12-08 08:00,2006-12-15 17:00,,,,,PT_Normal,,,,,RMVdRVUoSPmKOxddDXd1pA,UEuejLZkNEKG3wvw9P3osh,,,N,0,0,,,2007-02-01 02:43,2007-02-04 01:05,hbe4678,hbe4678,,,0
3194,12459375,14517,6816150,13331,1,100,N,N,N,CP_Units,TT_Task,DT_FixedDUR2,RV_OK,TK_Complete,EK01JPI143,01J Op's & Serv. Model Comment Resolution Approval,,,,0,0,0,0,40,0,0,0,,2006-07-26 08:00,2006-08-22 17:00,2009-02-13 17:00,2009-02-13 17:00,,2007-01-27 00:00,2007-01-27 00:00,,,2006-07-26 08:00,2006-08-01 17:00,,,,,PT_Normal,,,,,11N9Hr57SWKXvZ64hDWNNA,1ya0n9KXBU+jsorhPD0P0B,,,N,0,0,,,2007-02-01 02:43,2007-02-04 01:05,hbe4678,hbe4678,,,0
3195,12459376,14517,6816150,13330,1,100,N,N,N,CP_Units,TT_Task,DT_FixedDUR2,RV_OK,TK_Complete,EK010PI014,Plot Plan - Overall Site (Drwg 0101) Issue IFC,,,,0,0,0,0,360,0,0,0,,2006-02-27 08:00,2006-04-28 17:00,2007-04-28 08:01,2007-04-28 08:01,,2007-01-27 00:00,2007-01-27 00:00,,,2006-02-27 08:00,2006-04-28 17:00,,,,,PT_Normal,,,,,cLI8cvsrT6C0ZSyt2HEhZw,8QWBpO7tvUKh4uy7DpVa8B,,,N,0,0,,,2007-02-01 02:43,2007-02-04 01:05,hbe4678,hbe4678,,,0
3196,12459377,14517,6816150,13330,1,100,N,N,N,CP_Units,TT_Task,DT_FixedDUR2,RV_OK,TK_Complete,EK01API050,01A Model Comment Resolution Approval,,,,0,0,0,0,24,0,0,0,,2006-05-09 00:00,2006-05-18 00:00,2007-05-07 08:00,2007-05-07 08:00,,2007-01-27 00:00,2007-01-27 00:00,,,2006-05-01 08:00,2006-05-03 17:00,,,,,PT_Normal,,,,,t0VdXEwFRj2u+01nL4DbjA,3PLS4kUZ6U6NTJUJRTJDBh,,,N,0,0,,,2007-02-01 02:43,2007-02-04 01:05,hbe4678,hbe4678,,,0
3197,12459378,14517,6816150,13330,1,100,N,N,N,CP_Units,TT_Task,DT_FixedDUR2,RV_OK,TK_Complete,EK01API030,01A Conceptual Layout - Supersketches,,,,0,0,0,0,24,0,0,0,,2005-11-01 00:00,2005-11-07 17:00,2007-05-07 08:00,2007-05-07 08:00,,2007-01-27 00:00,2007-01-27 00:00,,,2005-11-16 08:00,2005-11-18 17:00,,,,,PT_Normal,,,,,hqk/NW28TuS1NHrxdVpZnQ,iyftBr1DTkyE9poA9BjYkR,,,N,0,0,,,2007-02-01 02:43,2007-02-04 01:05,hbe4678,hbe4678,,,0
3198,12459379,14517,6816150,13330,1,100,N,N,N,CP_Units,TT_Task,DT_FixedDUR2,RV_OK,TK_Complete,EK01BPI030,01B Conceptual Layout - Supersketches,,,,0,0,0,0,88,0,0,0,,2005-09-15 00:00,2005-09-30 17:00,2007-05-07 08:00,2007-05-07 08:00,,2007-01-27 00:00,2007-01-27 00:00,,,2005-09-05 08:00,2005-09-19 17:00,,,,,PT_Normal,,,,,rc4rTpRWTV2lmgEFgEFIUA,iRZlnVgS0kCoACN+Sh2z+B,,,N,0,0,,,2007-02-01 02:43,2007-02-04 01:05,hbe4678,hbe4678,,,0
3199,12459380,14517,6816150,13330,1,100,N,N,N,CP_Units,TT_Task,DT_FixedDUR2,RV_OK,TK_Complete,EK01BPI050,01B Model Comment Resolution Approval,,,,0,0,0,0,40,0,0,0,,2006-03-13 00:00,2006-03-17 00:00,2007-05-07 08:00,2007-05-07 08:00,,2007-01-27 00:00,2007-01-27 00:00,,,2006-03-20 08:00,2006-03-24 17:00,,,,,PT_Normal,,,,,pqkpHZYNT6Gsa/rPVisysA,xqe8bLocOEW6XzUrtBxRXh,,,N,0,0,,,2007-02-01 02:43,2007-02-04 01:05,hbe4678,hbe4678,,,0
3200,12459381,14517,6816150,13330,1,100,N,N,N,CP_Units,TT_Task,DT_FixedDUR2,RV_OK,TK_Complete,EK01DPI030,01D Conceptual Layout - Supersketches,,,,0,0,0,0,88,0,0,0,,2005-08-31 08:00,2005-09-14 17:00,2007-04-08 08:01,2007-04-08 08:01,,2007-01-27 00:00,2007-01-27 00:00,,,2005-08-31 08:00,2005-09-14 17:00,,,,,PT_Normal,,,,,HhQiXu6iRYSAWpPEnFgI7w,jcDMajkyE0mCySIoSkPzZR,,,N,0,0,,,2007-02-01 02:43,2007-02-04 01:05,hbe4678,hbe4678,,,0
3201,12459382,14517,6816150,13330,1,100,N,N,N,CP_Units,TT_Task,DT_FixedDUR2,RV_OK,TK_Complete,EK01DPI050,01D Model Comment Resolution Approval,,,,0,0,0,0,24,0,0,0,,2006-03-15 00:00,2006-03-15 17:00,2007-04-08 08:01,2007-04-08 08:01,,2007-01-27 00:00,2007-01-27 00:00,,,2006-03-20 08:00,2006-03-22 17:00,,,,,PT_Normal,,,,,N9gDOk+JTi6yNT8cKB0ZOw,OUOmufO01k6yS0/JuwbeFB,,,N,0,0,,,2007-02-01 02:43,2007-02-04 01:05,hbe4678,hbe4678,,,0
3202,12459383,14517,6816150,13330,1,100,N,N,N,CP_Units,TT_Task,DT_FixedDUR2,RV_OK,TK_Complete,EK01JPI030,01J Conceptual Layout - Supersketches,,,,0,0,0,0,56,0,0,0,,2005-10-26 00:00,2005-11-03 00:00,2007-07-02 08:00,2007-07-02 08:00,,2007-01-27 00:00,2007-01-27 00:00,,,2005-11-21 08:00,2005-11-29 17:00,,,,,PT_Normal,,,,,cpnAHT2yTHWrZlGc/Kj9Kw,Q2X2huBT9kK9x126C9QI0h,,,N,0,0,,,2007-02-01 02:43,2007-02-04 01:05,hbe4678,hbe4678,,,0
3203,12459384,14517,6816150,13330,1,100,N,N,N,CP_Units,TT_Task,DT_FixedDUR2,RV_OK,TK_Complete,EK01JPI050,01J Model Comment Resolution Approval,,,,0,0,0,0,40,0,0,0,,2006-07-04 08:00,2006-07-06 17:00,2007-07-09 08:00,2007-07-09 08:00,,2007-01-27 00:00,2007-01-27 00:00,,,2006-07-04 08:00,2006-07-10 17:00,,,,,PT_Normal,,,,,lqZvO3FyQ+eOG4kxwdF71w,IlHnOeADDkeAUe6B6+GUox,,,N,0,0,,,2007-02-01 02:43,2007-02-04 01:05,hbe4678,hbe4678,,,0
3204,12459385,14517,6816150,13330,1,100,N,N,N,CP_Units,TT_Task,DT_FixedDUR2,RV_OK,TK_Complete,EK01YPI050,01Y Model Comment Resolution Approval,,,,0,0,0,0,24,0,0,0,,2006-03-01 00:00,2006-03-03 00:00,2007-03-13 08:00,2007-03-13 08:00,,2007-01-27 00:00,2007-01-27 00:00,,,2006-03-15 08:00,2006-03-17 17:00,,,,,PT_Normal,,,,,dv23R05RSx2SIJV7W9aCTw,9XZgKtttpkaIK9J5zuoXSB,,,N,0,0,,,2007-02-01 02:43,2007-02-04 01:05,hbe4678,hbe4678,,,0
3205,12459386,14517,6816150,13330,1,100,N,N,N,CP_Units,TT_Task,DT_FixedDUR2,RV_OK,TK_Complete,EK01UPISSA,01U Plant Layout Model  - Sanitary Sewer,,,,0,0,0,0,128,0,0,0,,2005-09-26 00:00,2005-11-04 17:00,2007-03-13 08:00,2007-03-13 08:00,,2007-01-27 00:00,2007-01-27 00:00,,,2005-08-15 08:00,2005-09-05 17:00,,,,,PT_Normal,,,,,DmFw1iTkT7iPVjD+OJRqmA,H7thdu6FgEqO512G8CA5dx,,,N,0,0,,,2007-02-01 02:43,2007-02-04 01:05,hbe4678,hbe4678,,,0
3206,12459387,14517,6816150,13330,1,100,N,N,N,CP_Units,TT_Task,DT_FixedDUR2,RV_OK,TK_Complete,EK01UPIFWA,01U Plant Layout Model  - Firewater,,,,0,0,0,0,128,0,0,0,,2005-09-22 00:00,2005-11-07 17:00,2009-02-15 08:01,2009-02-15 08:01,,2007-01-27 00:00,2007-01-27 00:00,,,2005-08-15 08:00,2005-09-05 17:00,,,,,PT_Normal,,,,,nPWX9NbwRbmDabIySNL4Wg,w6Mv9PqlT0ClU15v5YZkex,,,N,0,0,,,2007-02-01 02:43,2007-02-04 01:05,hbe4678,hbe4678,,,0
3207,12459388,14517,6816150,13330,1,100,N,N,N,CP_Units,TT_Task,DT_FixedDUR2,RV_OK,TK_Complete,EK01UPICWA,01U Plant Layout Model   - Cooling Water,,,,0,0,0,0,128,0,0,0,,2005-08-20 00:00,2005-09-23 00:00,2007-03-13 08:00,2007-03-13 08:00,,2007-01-27 00:00,2007-01-27 00:00,,,2005-08-15 08:00,2005-09-05 17:00,,,,,PT_Normal,,,,,fvFQHL8VSG69o3vvCLrELA,XF6R9QFJ4UmLAPNFk/bfsR,,,N,0,0,,,2007-02-01 02:43,2007-02-04 01:05,hbe4678,hbe4678,,,0
3208,12459389,14517,6816150,13330,1,100,N,N,N,CP_Units,TT_Task,DT_FixedDUR2,RV_OK,TK_Complete,EK01UPIWWA,01U Plant Layout Model  - Waste Water,,,,0,0,0,0,40,0,0,0,,2005-10-31 00:00,2005-11-04 17:00,2007-03-13 08:00,2007-03-13 08:00,,2007-01-27 00:00,2007-01-27 00:00,,,2005-10-17 08:00,2005-10-21 17:00,,,,,PT_Normal,,,,,RNrK/o3kSDqFwQrmzQLVyQ,MdZiUWK5oEejGHuX20rFJR,,,N,0,0,,,2007-02-01 02:43,2007-02-04 01:05,hbe4678,hbe4678,,,0
3209,12459390,14517,6816150,13330,1,100,N,N,N,CP_Units,TT_Task,DT_FixedDUR2,RV_OK,TK_Complete,EK01BPI000,"01B Preliminary Drawings for Supersketch J-2001,2003,2004,2007",,,,0,0,0,0,8,0,0,0,,2005-08-29 08:00,2005-08-29 17:00,2007-05-07 08:00,2007-05-07 08:00,,2007-01-27 00:00,2007-01-27 00:00,,,2005-08-29 08:00,2005-08-29 17:00,,,,,PT_Normal,,,,,TQ4/imlYTzyY7ynbSx7nPg,9iWvfSXCd0uVaCxhEABCfh,,,N,0,0,,,2007-02-01 02:43,2007-02-04 01:05,hbe4678,hbe4678,,,0
3210,12459391,14517,6816150,13330,1,100,N,N,N,CP_Units,TT_Task,DT_FixedDUR2,RV_OK,TK_Complete,EK01DPI000,01D Preliminary Drawings for Supersketch J-2202,,,,0,0,0,0,8,0,0,0,,2005-08-29 08:00,2005-08-29 17:00,2007-04-08 08:01,2007-04-08 08:01,,2007-01-27 00:00,2007-01-27 00:00,,,2005-08-29 08:00,2005-08-29 17:00,,,,,PT_Normal,,,,,x4UfyVWISfi9lZTMs5y61Q,T9ve2Y7zhk2iE9MgpUVaix,,,N,0,0,,,2007-02-01 02:43,2007-02-04 01:05,hbe4678,hbe4678,,,0
3211,12459392,14517,6816150,13330,1,100,N,N,N,CP_Units,TT_Task,DT_FixedDUR2,RV_OK,TK_Complete,EK01UPIPWA,01U Plant Layout Model  - Potable Water,,,,0,0,0,0,128,0,0,0,,2005-10-27 00:00,2005-11-04 17:00,2007-03-13 08:00,2007-03-13 08:00,,2007-01-27 00:00,2007-01-27 00:00,,,2005-08-15 08:00,2005-09-05 17:00,,,,,PT_Normal,,,,,YEK2PuX1SHWTVPueq/ZPag,Ulkn+mqmqkGN8t8n7Tr6Hh,,,N,0,0,,,2007-02-01 02:43,2007-02-04 01:05,hbe4678,hbe4678,,,0
3212,12459393,14517,6816150,13330,1,100,N,N,N,CP_Units,TT_Task,DT_FixedDUR2,RV_OK,TK_Complete,EK01PIBSA,01U Plant Layout Model   - Benfield Sewer,,,,0,0,0,0,128,0,0,0,,2005-09-26 00:00,2005-11-04 17:00,2007-03-13 08:00,2007-03-13 08:00,,2007-01-27 00:00,2007-01-27 00:00,,,2005-08-15 08:00,2005-09-05 17:00,,,,,PT_Normal,,,,,qPvGsO9oQAuQD+KckgQuQg,Oqj6Zd4hGUO2puVz1BYOFh,,,N,0,0,,,2007-02-01 02:43,2007-02-04 01:05,hbe4678,hbe4678,,,0
3213,12459394,14517,6816150,13330,1,100,N,N,N,CP_Units,TT_Task,DT_FixedDUR2,RV_OK,TK_Complete,EK01UPIPAA,01U Plant Layout Model  - Plant Air,,,,0,0,0,0,128,0,0,0,,2005-10-31 00:00,2005-10-31 00:00,2007-03-13 08:00,2007-03-13 08:00,,2007-01-27 00:00,2007-01-27 00:00,,,2005-08-15 08:00,2005-09-05 17:00,,,,,PT_Normal,,,,,KyEk0GILQfSg8jqqFeIIhA,XVYdq9wbR0Kxtd8wvg8SDh,,,N,0,0,,,2007-02-01 02:43,2007-02-04 01:05,hbe4678,hbe4678,,,0
3214,12459395,14517,6816150,13330,1,100,N,N,N,CP_Drtn,TT_Task,DT_FixedDUR2,RV_OK,TK_Complete,EK01DPI021,01D Model Review Comment Resolution,,,,0,0,0,0,24,0,0,0,,2006-03-06 00:00,2006-03-10 00:00,2007-04-08 08:01,2007-04-08 08:01,,2007-01-27 00:00,2007-01-27 00:00,,,2006-03-13 08:00,2006-03-15 17:00,,,,,PT_Normal,,,,,g/nYTgtHRwumft18Jyp3EQ,,,,N,0,0,,,2007-02-01 02:43,2007-02-04 01:05,hbe4678,hbe4678,,,0
3215,12459396,14517,6816150,13331,1,100,N,N,N,CP_Units,TT_Task,DT_FixedDUR2,RV_OK,TK_Complete,EK01API144,01A OP's & Serv. Model Comments Resolution Approval,,,,0,0,0,0,16,0,0,0,,2006-08-31 00:00,2006-09-01 00:00,2007-08-27 08:01,2007-08-27 08:01,,2007-01-27 00:00,2007-01-27 00:00,,,2006-08-28 08:00,2006-08-29 17:00,,,,,PT_Normal,,,,,whFUP9BERqODjJHgmNzbAQ,7WgTa+mHG0ugT8+HUCSJFw,,,N,0,0,,,2007-02-01 02:43,2007-02-04 01:05,hbe4678,hbe4678,,,0
3216,12459397,14517,6816150,13330,1,100,N,N,N,CP_Units,TT_Task,DT_FixedDUR2,RV_OK,TK_Complete,EK010PI012,Plot Plan - Overall Site (Drwg 0101) Issue IPL,,,,0,0,0,0,240,0,0,0,,2005-12-29 00:00,2006-01-20 00:00,2007-02-06 08:01,2007-02-06 08:01,,2007-01-27 00:00,2007-01-27 00:00,,,2006-01-23 08:00,2006-03-03 17:00,,,,,PT_Normal,,,,,Yd/7iipdTieFnRuxK53N7A,,,,N,0,0,,,2007-02-01 02:43,2007-02-04 01:05,hbe4678,hbe4678,,,0
3217,12459398,14517,6816150,13330,1,100,N,N,N,CP_Units,TT_Task,DT_FixedDUR2,RV_OK,TK_Complete,EK010PI013,Plot Plan - Overall Site (Drwg 0101) Issue IPL,,,,0,0,0,0,320,0,0,0,,2006-01-23 00:00,2006-02-23 00:00,2007-02-06 08:01,2007-02-06 08:01,,2007-01-27 00:00,2007-01-27 00:00,,,2006-04-13 08:00,2006-06-07 17:00,,,,,PT_Normal,,,,,H2xa+HMdTgSYGxQ4JAKQjg,,,,N,0,0,,,2007-02-01 02:43,2007-02-04 01:05,hbe4678,hbe4678,,,0
3218,12459399,14517,6816150,13330,1,100,N,N,N,CP_Units,TT_Task,DT_FixedDUR2,RV_OK,TK_Complete,EK010PI010,Develop Plot Plan & ID Areas - Overall Site (Drwg 0101) ICA,,,,0,0,0,0,160,0,0,0,,2005-04-22 08:00,2005-09-30 17:00,2007-02-06 08:01,2007-02-06 08:01,,2007-01-27 00:00,2007-01-27 00:00,,,2005-04-22 08:00,2005-05-19 17:00,,,,,PT_Normal,,,,,1dDjzCLfSNeIPXA/W6IFcQ,,,,N,0,0,,,2007-02-01 02:43,2007-02-04 01:05,hbe4678,hbe4678,,,0
3219,12459400,14517,6816150,13330,1,100,N,N,N,CP_Units,TT_Task,DT_FixedDUR2,RV_OK,TK_Complete,EK010PI005,Develop Plot Plan & ID Areas - Overall Site IFI,,,,0,,0,,80,,,0,,2005-04-01 08:00,2005-04-08 17:00,2007-02-06 08:01,2007-02-06 08:01,,2007-01-27 00:00,2007-01-27 00:00,,,2005-04-01 08:00,2005-04-14 17:00,,,,,PT_Normal,,,,,bYrjJpsyQo+BoFUK/vIsCA,,,,N,,,,,2007-02-01 02:43,2007-02-04 01:05,hbe4678,hbe4678,,,0
3220,12459401,14517,6816150,13330,1,100,N,N,N,CP_Units,TT_Task,DT_FixedDUR2,RV_OK,TK_Complete,EK010PI011,Plot Plan - Overall Site (Drwg 0101) Client ICA Approval,,,,0,0,0,0,80,0,0,0,,2005-10-03 00:00,2005-10-14 17:00,2007-02-06 08:01,2007-02-06 08:01,,2007-01-27 00:00,2007-01-27 00:00,,,2005-09-26 08:00,2005-10-07 17:00,,,,,PT_Normal,,,,,KY4+Vz8ERwW+twAgKkVPGA,,,,N,0,0,,,2007-02-01 02:43,2007-02-04 01:05,hbe4678,hbe4678,,,0
3221,12459402,14517,6816152,13330,1,100,N,N,N,CP_Units,TT_Task,DT_FixedDUR2,RV_OK,TK_Complete,EK000FP012,FP Electrical Area Classification OSBL - ICA,,,,0,0,0,0,40,0,0,0,,2005-10-17 08:01,2005-11-10 00:00,2009-02-15 08:01,2009-02-15 08:01,,2007-01-27 00:00,2007-01-27 00:00,,,2005-10-17 08:01,2005-10-24 08:01,,,,,PT_Normal,,,,,1aBR1FtbSrCKm00w3mNM0Q,,,,N,0,0,,,2007-02-01 02:43,2007-02-04 01:05,hbe4678,hbe4678,,,0
3222,12459403,14517,6816152,13330,1,100,N,N,N,CP_Units,TT_Task,DT_FixedDUR2,RV_OK,TK_Complete,EK010FP011,FP Firewater Pump P&IDs - Development & Issue ICA,,,,0,0,0,0,424,0,0,0,,2005-05-06 08:00,2005-07-19 00:00,2009-02-15 08:01,2009-02-15 08:01,,2007-01-27 00:00,2007-01-27 00:00,,,2005-05-06 08:00,2005-07-22 17:00,,,,,PT_Normal,,,,,Nr3473u1RWCHdQX/Mi5/GQ,KgrIaeXOak6lcVCRdBdRRh,,,N,0,0,,,2007-02-01 02:43,2007-02-04 01:05,hbe4678,hbe4678,,,0
3223,12459404,14517,6816152,13330,1,100,N,N,N,CP_Units,TT_Task,DT_FixedDUR2,RV_OK,TK_Complete,EK010FP020,FP Firewater Pump P&IDs - Development & Issue IPL,,,,0,0,0,0,560,0,0,0,,2005-07-20 00:00,2005-12-01 00:00,2009-02-15 08:01,2009-02-15 08:01,,2007-01-27 00:00,2007-01-27 00:00,,,2005-08-22 08:00,2005-11-25 17:00,,,,,PT_Normal,,,,,fdnMjxywQ/e+DCjSP7ldIg,IE9MnEooqkW7DP0SLJk4/R,,,N,0,0,,,2007-02-01 02:43,2007-02-04 01:05,hbe4678,hbe4678,,,0
3224,12459405,14517,6816152,13330,1,100,N,N,N,CP_Units,TT_Task,DT_FixedDUR2,RV_OK,TK_Complete,EK010FP031,FP Firewater Pump P&IDs - Development & Issue IFD,,,,0,0,0,0,520,0,0,0,,2005-12-02 00:00,2006-07-26 00:00,2009-02-15 08:01,2009-02-15 08:01,,2007-01-27 00:00,2007-01-27 00:00,,,2006-04-13 16:59,2006-07-13 16:59,,,,,PT_Normal,,,,,iP55h10AReipmEqRDDnNsw,RG+CzAYNnkq++q8Jo19KyR,,,N,0,0,,,2007-02-01 02:43,2007-02-04 01:05,hbe4678,hbe4678,,,0
3225,12459406,14517,6816152,13330,1,100,N,N,N,CP_Units,TT_Task,DT_FixedDUR2,RV_OK,TK_Complete,EK010FP040,FP Firewater Pump P&IDs - Development & Issue IFC,,,,0,0,0,0,552,0,0,0,,2006-07-18 08:00,2006-09-27 17:00,2009-02-15 08:01,2009-02-15 08:01,,2007-01-27 00:00,2007-01-27 00:00,,,2006-07-18 08:00,2006-10-20 17:00,,,,,PT_Normal,,,,,Dfx9aA01SWGUDPdaZLXNpg,A0Lg/jwGTUuxNnYD57eLdh,,,N,0,0,,,2007-02-01 02:43,2007-02-04 01:05,hbe4678,hbe4678,,,0
3226,12459407,14517,6816152,13330,1,100,N,N,N,CP_Units,TT_Task,DT_FixedDUR2,RV_OK,TK_Complete,EK010FP050,FP Deluge P&IDs - Development & Issue ICA,,,,0,0,0,0,424,0,0,0,,2005-05-06 08:00,2005-07-19 00:00,2009-02-15 08:01,2009-02-15 08:01,,2007-01-27 00:00,2007-01-27 00:00,,,2005-05-06 08:00,2005-07-22 17:00,,,,,PT_Normal,,,,,o/LVq1M1RZ6R2bkjkBgonA,UFOKX2sWRkedyscu24vffB,,,N,0,0,,,2007-02-01 02:43,2007-02-04 01:05,hbe4678,hbe4678,,,0
3227,12459408,14517,6816152,13330,1,100,N,N,N,CP_Units,TT_Task,DT_FixedDUR2,RV_OK,TK_Complete,EK010FP060,FP Deluge P&IDs - Development & Issue IPL,,,,0,0,0,0,560,0,0,0,,2005-07-20 00:00,2005-12-01 00:00,2009-02-15 08:01,2009-02-15 08:01,,2007-01-27 00:00,2007-01-27 00:00,,,2005-08-22 08:00,2005-11-25 17:00,,,,,PT_Normal,,,,,NKtit42jTQieiSPbNEei4Q,HNlTsPEqF0SDV4XUC9yVcx,,,N,0,0,,,2007-02-01 02:43,2007-02-04 01:05,hbe4678,hbe4678,,,0
3228,12459409,14517,6816152,13330,1,100,N,N,N,CP_Units,TT_Task,DT_FixedDUR2,RV_OK,TK_Complete,EK020FP490,FP OSBL Fire Protection Eqmt. Location Plans - ICA,,,,0,0,0,0,40,0,0,0,,2005-09-01 00:00,2005-10-03 00:00,2009-02-15 08:01,2009-02-15 08:01,,2007-01-27 00:00,2007-01-27 00:00,,,2005-10-17 08:01,2005-10-24 08:01,,,,,PT_Normal,,,,,SvYKeINCQAWyANv2Nl+ijw,fR6g89/2jky/KOmGZtjXyx,,,N,0,0,,,2007-02-01 02:43,2007-02-04 01:05,hbe4678,hbe4678,,,0
3229,12459410,14517,6816152,13330,1,100,N,N,N,CP_Units,TT_Task,DT_FixedDUR2,RV_OK,TK_Complete,EK020FP460,FP Electrical Area Classification OSBL - IFC,,,,0,0,0,0,80,0,0,0,,2006-05-01 00:00,2006-08-18 00:00,2009-02-15 08:01,2009-02-15 08:01,,2007-01-27 00:00,2007-01-27 00:00,,,2006-05-15 08:00,2006-05-26 17:00,,,,,PT_Normal,,,,,An05OzouQZ+yaiLO53L91A,sjRKsdfotEOs93sodfX6MR,,,N,0,0,,,2007-02-01 02:43,2007-02-04 01:05,hbe4678,hbe4678,,,0
3230,12459411,14517,6816153,13330,1,100,N,N,N,CP_Units,TT_Task,DT_FixedDUR2,RV_OK,TK_Complete,EK010SY030,010 CW Twr & FW Tanks P&ID IDR Meeting milestone,,,,0,0,0,0,16,0,0,0,,2005-06-01 08:00,2005-06-02 17:00,2007-01-09 08:01,2007-01-09 08:01,,2007-01-27 00:00,2007-01-27 00:00,,,2005-06-01 08:00,2005-06-02 17:00,,,,,PT_Normal,,,,,wsygPXzUSn+qxGRE8e4Ldw,,,,N,0,0,,,2007-02-01 02:43,2007-02-04 01:05,hbe4678,hbe4678,,,0
3231,12459412,14517,6816153,13330,1,100,N,N,N,CP_Units,TT_Task,DT_FixedDUR2,RV_OK,TK_Complete,EK010SY040,010 CW Twr & FW Tanks P&IDs - ICA Issue development,,,,0,0,0,0,272,0,0,0,,2005-06-03 08:00,2005-07-21 00:00,2007-01-09 08:01,2007-01-09 08:01,,2007-01-27 00:00,2007-01-27 00:00,,,2005-06-03 08:00,2005-07-22 17:00,,,,,PT_Normal,,,,,wR/ZYwIFT8W54iEKHlFAeA,,,,N,0,0,,,2007-02-01 02:43,2007-02-04 01:05,hbe4678,hbe4678,,,0
3232,12459413,14517,6816153,13330,1,100,N,N,N,CP_Units,TT_Task,DT_FixedDUR2,RV_OK,TK_Complete,EK010SY135,010 CW Twr & FW Tanks CV & FE Process Data,,,,0,0,0,0,120,0,0,0,,2005-08-29 08:00,2005-09-16 17:00,2007-01-09 08:01,2007-01-09 08:01,,2007-01-27 00:00,2007-01-27 00:00,,,2005-08-29 08:00,2005-09-16 17:00,,,,,PT_Normal,,,,,Uqx9B6O6SBuOVaXkFnpZaw,,,,N,0,0,,,2007-02-01 02:43,2007-02-04 01:05,hbe4678,hbe4678,,,0
3233,12459414,14517,6816153,13330,0,100,N,N,N,CP_Units,TT_FinMile,DT_FixedDUR2,RV_OK,TK_Complete,EK010SY050,010 Twr & FW Tanks P&IDs - ICA Issue Milestone,,,,0,0,0,0,0,0,0,0,,2005-07-21 00:00,2005-07-21 00:00,2007-01-09 08:01,2007-01-09 08:01,,2007-01-27 00:00,2007-01-27 00:00,,,2005-07-22 17:00,2005-07-22 17:00,,,,,PT_Normal,,,,,+TTMRQPDQDyO0YeJHv+CDA,,,,N,0,0,,,2007-02-01 02:43,2007-02-04 01:05,hbe4678,hbe4678,,,0
3234,12459415,14517,6816153,13330,0,100,N,N,N,CP_Units,TT_FinMile,DT_FixedDUR2,RV_OK,TK_Complete,EK01FSY170,01F OSBL P&IDs IPL & Line List Issue Milestone,,,,0,0,0,0,0,0,0,0,,2005-12-01 00:00,2005-12-01 00:00,2007-05-07 08:01,2007-05-07 08:01,,2007-01-27 00:00,2007-01-27 00:00,,,2005-11-30 17:00,2005-11-30 17:00,,,,,PT_Normal,,,,,C83sXoEhRRKdRV2X8WnIjw,bOQ6LoPalESz1D3iyVLT+R,,,N,0,0,,,2007-02-01 02:43,2007-02-04 01:05,hbe4678,hbe4678,,,0
3235,12459416,14517,6816153,13330,0,100,N,N,N,CP_Units,TT_FinMile,DT_FixedDUR2,RV_OK,TK_Complete,EK01ASY170,01A OSBL P&IDs IPL & Line List Issue Milestone,,,,0,0,0,0,0,0,0,0,,2005-12-01 00:00,2005-12-01 00:00,2007-05-07 08:00,2007-05-07 08:00,,2007-01-27 00:00,2007-01-27 00:00,,,2005-11-30 17:00,2005-11-30 17:00,,,,,PT_Normal,,,,,yxMK6ydaRtu9cK7zqCHo3w,TC3Ef5hetEy05V2nIQ0aUh,,,N,0,0,,,2007-02-01 02:43,2007-02-04 01:05,hbe4678,hbe4678,,,0
3236,12459417,14517,6816153,13330,0,100,N,N,N,CP_Units,TT_FinMile,DT_FixedDUR2,RV_OK,TK_Complete,EK01BSY170,01B OSBL P&IDs IPL & Line List Issue Milestone,,,,0,0,0,0,0,0,0,0,,2005-12-01 00:00,2005-12-01 00:00,2007-05-07 08:00,2007-05-07 08:00,,2007-01-27 00:00,2007-01-27 00:00,,,2005-11-30 17:00,2005-11-30 17:00,,,,,PT_Normal,,,,,fh2ClhxQS+SaJdExqnOcxg,56NXs3ZHmUip03htKz/Zux,,,N,0,0,,,2007-02-01 02:43,2007-02-04 01:05,hbe4678,hbe4678,,,0
3237,12459418,14517,6816153,13330,0,100,N,N,N,CP_Units,TT_FinMile,DT_FixedDUR2,RV_OK,TK_Complete,EK01CSY170,01C OSBL P&IDs IPL & Line List Issue Milestone,,,,0,0,0,0,0,0,0,0,,2005-12-01 00:00,2005-12-01 00:00,2007-05-07 08:00,2007-05-07 08:00,,2007-01-27 00:00,2007-01-27 00:00,,,2005-11-30 17:00,2005-11-30 17:00,,,,,PT_Normal,,,,,s3/9fHelTX+bL7mEXoft3w,Ger3okm0BEKtoYeWi5f4JB,,,N,0,0,,,2007-02-01 02:43,2007-02-04 01:05,hbe4678,hbe4678,,,0
3238,12459419,14517,6816153,13330,0,100,N,N,N,CP_Units,TT_FinMile,DT_FixedDUR2,RV_OK,TK_Complete,EK01DSY170,01D OSBL P&IDs IPL & Line List Issue Milestone,,,,0,0,0,0,0,0,0,0,,2005-12-01 00:00,2005-12-01 00:00,2007-04-08 08:01,2007-04-08 08:01,,2007-01-27 00:00,2007-01-27 00:00,,,2005-11-30 17:00,2005-11-30 17:00,,,,,PT_Normal,,,,,ygj9r8tWRiSIUVuqO8Y4Bw,IUEadbNfo02WPU4rbrOXux,,,N,0,0,,,2007-02-01 02:43,2007-02-04 01:05,hbe4678,hbe4678,,,0
3239,12459420,14517,6816153,13330,0,100,N,N,N,CP_Units,TT_FinMile,DT_FixedDUR2,RV_OK,TK_Complete,EK01ESY170,01E OSBL P&IDs IPL & Line List Issue Milestone,,,,0,0,0,0,0,0,0,0,,2005-12-01 00:00,2005-12-01 00:00,2007-07-09 08:00,2007-07-09 08:00,,2007-01-27 00:00,2007-01-27 00:00,,,2005-11-30 17:00,2005-11-30 17:00,,,,,PT_Normal,,,,,2s2+oeR/R56rCApRYidv7w,0nefybON0ki0xXcFlagutx,,,N,0,0,,,2007-02-01 02:43,2007-02-04 01:05,hbe4678,hbe4678,,,0
3240,12459421,14517,6816153,13330,0,100,N,N,N,CP_Units,TT_FinMile,DT_FixedDUR2,RV_OK,TK_Complete,EK01HSY170,01H OSBL P&IDs IPL & Line List Issue Milestone,,,,0,0,0,0,0,0,0,0,,2005-12-01 00:00,2005-12-01 00:00,2007-03-27 08:01,2007-03-27 08:01,,2007-01-27 00:00,2007-01-27 00:00,,,2005-11-30 17:00,2005-11-30 17:00,,,,,PT_Normal,,,,,mHiY3WIYThOFbbdFMge8iA,FJlfF5Qe10KuydALzxMUhh,,,N,0,0,,,2007-02-01 02:43,2007-02-04 01:05,hbe4678,hbe4678,,,0
3241,12459422,14517,6816153,13330,0,100,N,N,N,CP_Units,TT_FinMile,DT_FixedDUR2,RV_OK,TK_Complete,EK01JSY170,01J OSBL P&IDs IPL & Line List Issue Milestone,,,,0,0,0,0,0,0,0,0,,2005-12-01 00:00,2005-12-01 00:00,2007-07-02 08:00,2007-07-02 08:00,,2007-01-27 00:00,2007-01-27 00:00,,,2005-11-30 17:00,2005-11-30 17:00,,,,,PT_Normal,,,,,nB+v76CxSZWCsrXj6SrthQ,tYZjRT/tyU+QhSLBWsRdQR,,,N,0,0,,,2007-02-01 02:43,2007-02-04 01:05,hbe4678,hbe4678,,,0
3242,12459423,14517,6816153,13330,0,100,N,N,N,CP_Units,TT_FinMile,DT_FixedDUR2,RV_OK,TK_Complete,EK01YSY170,01Y OSBL P&IDs IPL & Line List Issue Milestone,,,,0,0,0,0,0,0,0,0,,2005-12-01 00:00,2005-12-01 00:00,2007-03-13 08:00,2007-03-13 08:00,,2007-01-27 00:00,2007-01-27 00:00,,,2005-11-30 17:00,2005-11-30 17:00,,,,,PT_Normal,,,,,69MfMn08TDq87tjGXkZcIg,anuAuHMibU2mzPt/vTNOOR,,,N,0,0,,,2007-02-01 02:43,2007-02-04 01:05,hbe4678,hbe4678,,,0
3243,12459424,14517,6816153,13330,1,100,N,N,N,CP_Units,TT_Task,DT_FixedDUR2,RV_OK,TK_Complete,EK010SY155,010 Issue  Requisition - PSA08 Relief Valves - CW Twr & FW Tanks,,,,0,0,0,0,40,0,0,0,,2005-11-04 08:01,2005-12-20 00:00,2008-01-23 08:01,2008-01-23 08:01,,2007-01-27 00:00,2007-01-27 00:00,,,2005-11-04 08:01,2005-11-11 08:01,,,,,PT_Normal,,,,,d64x57XlRSKb1dSOkAWJiA,6tXjFxEihUyoKm2xNZxtHh,,,N,0,0,,,2007-02-01 02:43,2007-02-04 01:05,hbe4678,hbe4678,,,0
3244,12459425,14517,6816153,13330,1,100,N,N,N,CP_Units,TT_Task,DT_FixedDUR2,RV_OK,TK_Complete,EK000SY075,010 OSBL Hydraulic Calculations,,,,0,0,0,,440,,0,0,,2005-04-11 08:00,2005-08-29 17:00,2006-12-25 08:00,2006-12-25 08:00,,2007-01-27 00:00,2007-01-27 00:00,,,2005-04-11 08:00,2005-06-27 17:00,,,,,PT_Normal,,,,,FaO3nDXwRNOwtlueEnC+Lw,,,,N,0,0,,,2007-02-01 02:43,2007-02-04 01:05,hbe4678,hbe4678,,,0
3245,12459426,14517,6816153,13330,1,100,N,N,N,CP_Units,TT_Task,DT_FixedDUR2,RV_OK,TK_Complete,EK010SY150,010 Relief Valve Calculations - CW Twr & FW Tanks,,,,0,0,0,0,120,0,0,0,,2005-09-13 08:00,2005-10-26 17:00,2007-03-13 08:00,2007-03-13 08:00,,2007-01-27 00:00,2007-01-27 00:00,,,2005-09-13 08:00,2005-10-03 17:00,,,,,PT_Normal,,,,,zAp9j7cSTUO7ig7EjIdUXw,,,,N,0,0,,,2007-02-01 02:43,2007-02-04 01:05,hbe4678,hbe4678,,,0
3246,12459427,14517,6816153,13330,1,100,N,N,N,CP_Units,TT_Task,DT_FixedDUR2,RV_OK,TK_Complete,EK010SY060,010 CW Twr & FW Tanks P&ID's - IPL Issue Development,,,,0,0,0,0,480,0,0,0,,2005-07-25 08:00,2005-12-01 00:00,2007-03-13 08:00,2007-03-13 08:00,,2007-01-27 00:00,2007-01-27 00:00,,,2005-07-25 08:00,2005-10-14 17:00,,,,,PT_Normal,,,,,zY4OMzXpQjiZXB52fwY+1w,,,,N,0,0,,,2007-02-01 02:43,2007-02-04 01:05,hbe4678,hbe4678,,,0
3247,12459428,14517,6816153,13330,1,100,N,N,N,CP_Units,TT_Task,DT_FixedDUR2,RV_OK,TK_Complete,EK010SY010,010 Issue Marked up FMCL U&O / Dock P&ID's,,,,0,,0,,80,,,0,,2005-03-21 08:00,2005-03-23 17:00,2007-01-09 08:01,2007-01-09 08:01,,2007-01-27 00:00,2007-01-27 00:00,,,2005-03-21 08:00,2005-04-01 17:00,,,,,PT_Normal,,,,,FF4m2JomS3Gsbxu8SJAHkA,,,,N,,,,,2007-02-01 02:43,2007-02-04 01:05,hbe4678,hbe4678,,,0
3248,12459429,14517,6816153,13330,0,100,N,N,N,CP_Units,TT_FinMile,DT_FixedDUR2,RV_OK,TK_Complete,EK010SY090,010 CW Twr & FW Tanks P&IDs IPL Issue Milestone,,,,0,0,0,0,0,0,0,0,,2005-12-01 00:00,2005-12-01 00:00,2007-03-13 08:00,2007-03-13 08:00,,2007-01-27 00:00,2007-01-27 00:00,,,2005-11-30 17:00,2005-11-30 17:00,,,,,PT_Normal,,,,,pzTmMirTS8OdU1LACXIwNw,,,,N,0,0,,,2007-02-01 02:43,2007-02-04 01:05,hbe4678,hbe4678,,,0
3249,12459430,14517,6816153,13330,1,100,N,N,N,CP_Units,TT_Task,DT_FixedDUR2,RV_OK,TK_Complete,EK010SY185,010 SP Item Data Sheets - CW Twr & FW Tanks,,,,0,0,0,0,80,0,0,0,,2005-10-26 00:00,2006-01-24 00:00,2008-01-09 08:01,2008-01-09 08:01,,2007-01-27 00:00,2007-01-27 00:00,,,2005-10-27 08:00,2005-11-09 17:00,,,,,PT_Normal,,,,,UHIzQjWFSRazYUq/Cfy8Hg,,,,N,0,0,,,2007-02-01 02:43,2007-02-04 01:05,hbe4678,hbe4678,,,0
3250,12459431,14517,6816153,13330,1,100,N,N,N,CP_Units,TT_Task,DT_FixedDUR2,RV_OK,TK_Complete,EK000SY060,010 Util & Offsites Conceptual Design revw mtngs,,,,0,,0,,112,,,0,,2005-04-11 08:00,2005-04-18 17:00,2006-12-25 08:00,2006-12-25 08:00,,2007-01-27 00:00,2007-01-27 00:00,,,2005-04-11 08:00,2005-04-28 17:00,,,,,PT_Normal,,,,,PEx2w+37RZmQpY7pDe6G/w,,,,N,,,,,2007-02-01 02:43,2007-02-04 01:05,hbe4678,hbe4678,,,0
3251,12459432,14517,6816153,13330,1,100,N,N,N,CP_Units,TT_Task,DT_FixedDUR2,RV_OK,TK_Complete,EK010SY020,010 CW Twr & FW Tanks P&ID development IDR Issue,,,,0,0,0,0,168,0,0,0,,2005-05-06 08:00,2005-05-26 00:00,2007-01-09 08:01,2007-01-09 08:01,,2007-01-27 00:00,2007-01-27 00:00,,,2005-05-06 08:00,2005-06-06 17:00,,,,,PT_Normal,,,,,CF00WA/TQ5Guc8As0f9fYA,,,,N,0,0,,,2007-02-01 02:43,2007-02-04 01:05,hbe4678,hbe4678,,,0
3252,12459433,14517,6816156,4047,1,100,N,N,N,CP_Drtn,TT_Task,DT_FixedDUR2,RV_OK,TK_Complete,PK03FMD03,03F MD411  2006-F Boiler Blowdown Drum - Prod. V. Data,,,,0,0,0,0,280,0,0,0,,2005-09-16 00:00,2005-10-14 00:00,2007-05-10 08:01,2007-05-10 08:01,,2007-01-27 00:00,2007-01-27 00:00,,,2006-01-30 08:00,2006-03-17 17:00,,,,,PT_Normal,,,,,QTrdO7P3ShetTW3HhzFmDQ,,,,N,0,0,,,2007-02-01 02:43,2007-02-04 01:05,hbe4678,hbe4678,,,0
3253,12459434,14517,6816156,4047,1,100,N,N,N,CP_Drtn,TT_Task,DT_FixedDUR2,RV_OK,TK_Complete,PK03CMD06,03C MD411  2203-F 50% Caustic Storage Tank - Prod. V. Data,,,,0,0,0,0,280,0,0,0,,2006-01-30 08:00,2006-01-30 17:00,2007-05-08 08:00,2007-05-08 08:00,,2007-01-27 00:00,2007-01-27 00:00,,,2006-01-30 08:00,2006-03-17 17:00,,,,,PT_Normal,,,,,Wj8BhYILTBuIM9OzQbEQqQ,,,,N,0,0,,,2007-02-01 02:43,2007-02-04 01:05,hbe4678,hbe4678,,,0
3254,12459435,14517,6816156,4047,1,100,N,N,N,CP_Drtn,TT_Task,DT_FixedDUR2,RV_OK,TK_Complete,PK03CMD07,03C MD411  2204-F 98% Sulfuric Acid Drum - Prod. V. Data,,,,0,0,0,0,280,0,0,0,,2006-01-30 08:00,2006-01-30 17:00,2007-05-08 08:00,2007-05-08 08:00,,2007-01-27 00:00,2007-01-27 00:00,,,2006-01-30 08:00,2006-03-17 17:00,,,,,PT_Normal,,,,,y5BxxwqvRRiZEH7mRNGlxQ,,,,N,0,0,,,2007-02-01 02:43,2007-02-04 01:05,hbe4678,hbe4678,,,0
3255,12459436,14517,6816156,4047,1,100,N,N,N,CP_Drtn,TT_Task,DT_FixedDUR2,RV_OK,TK_Complete,PK03DMF01,03D MF302  2002-F Demineralized Water Tank - Prod. V. Data (Subcontract),,,,0,0,0,0,280,0,0,0,,2006-02-27 08:00,2006-06-30 17:00,2007-05-29 08:01,2007-05-29 08:01,,2007-01-27 00:00,2007-01-27 00:00,,,2006-02-27 08:00,2006-04-14 17:00,,,,,PT_Normal,,,,,i2OnwAu9R8uOPlw5wZKYKw,,,,N,0,0,,,2007-02-01 02:43,2007-02-04 01:05,hbe4678,hbe4678,,,0
3256,12459437,14517,6816156,4047,1,100,N,N,N,CP_Drtn,TT_Task,DT_FixedDUR2,RV_OK,TK_Complete,PK03DMF00,03D MF302  2002-F Demineralized Water Tank - Fdn. V. Data (Subcontract),,,,0,0,0,0,280,0,0,0,,2006-02-27 08:00,2006-04-17 17:00,2007-05-29 08:01,2007-05-29 08:01,,2007-01-27 00:00,2007-01-27 00:00,,,2006-02-27 08:00,2006-04-14 17:00,,,,,PT_Normal,,,,,HjUqVz8HRQav88xSX3si3A,FljVkc9B9E6U/Hj9BXW53A,,,N,0,0,,,2007-02-01 02:43,2007-02-04 01:05,hbe4678,hbe4678,,,0
3257,12459438,14517,6816157,4047,1,100,N,N,N,CP_Drtn,TT_Task,DT_FixedDUR2,RV_OK,TK_Complete,PK03FMUV07,03F MU310  2001-L - Piping Prod. V. Data,,,,0,0,0,0,280,0,0,0,,2006-02-14 08:00,2006-06-26 17:00,2007-05-10 08:01,2007-05-10 08:01,,2007-01-27 00:00,2007-01-27 00:00,,,2006-02-14 08:00,2006-04-03 17:00,,,,,PT_Normal,,,,,AmzaDMhNTlaJCPis50JnpA,UOOPDEZgCE6QW31N+t6grQ,,,N,0,0,,,2007-02-01 02:43,2007-02-04 01:05,hbe4678,hbe4678,,,0
3258,12459439,14517,6816157,4047,1,100,N,N,N,CP_Drtn,TT_Task,DT_FixedDUR2,RV_OK,TK_Complete,PK03FMUV08,03F MU310  2001-L - Civil Prod. V. Data,,,,0,0,0,0,280,0,0,0,,2006-02-14 08:00,2006-06-26 17:00,2007-07-31 08:01,2007-07-31 08:01,,2007-01-27 00:00,2007-01-27 00:00,,,2006-02-14 08:00,2006-04-03 17:00,,,,,PT_Normal,,,,,Ebliy65AQDqZItB8FgxLCQ,UOOPDEZgCE6QW31N+t6grQ,,,N,0,0,,,2007-02-01 02:43,2007-02-04 01:05,hbe4678,hbe4678,,,0
3259,12459440,14517,6816157,4047,1,100,N,N,N,CP_Drtn,TT_Task,DT_FixedDUR2,RV_OK,TK_Complete,PK03FMUV09,03F MU310  2001-L - E&I Prod. V. Data,,,,0,0,0,0,280,0,0,0,,2006-02-14 08:00,2006-06-26 17:00,2009-01-13 08:00,2009-01-13 08:00,,2007-01-27 00:00,2007-01-27 00:00,,,2006-02-14 08:00,2006-04-03 17:00,,,,,PT_Normal,,,,,6sWigTbqSuy+t6I6uDDAMw,UOOPDEZgCE6QW31N+t6grQ,,,N,0,0,,,2007-02-01 02:43,2007-02-04 01:05,hbe4678,hbe4678,,,0
3260,12459441,14517,6816157,4047,1,100,N,N,N,CP_Drtn,TT_Task,DT_FixedDUR2,RV_OK,TK_Complete,PK03BMUV04,03B MU292  2404-L - Piping Prod. V. Data,,,,0,0,0,0,280,0,0,0,,2006-04-19 00:00,2006-06-14 00:00,2007-07-09 08:00,2007-07-09 08:00,,2007-01-27 00:00,2007-01-27 00:00,,,2006-05-15 08:00,2006-06-30 17:00,,,,,PT_Normal,,,,,IP9UpYQJQ4+Ehx/hjlJLSQ,YRlCTM3zHkKoI3TuPOyGfQ,,,N,0,0,,,2007-02-01 02:43,2007-02-04 01:05,hbe4678,hbe4678,,,0
3261,12459442,14517,6816157,4047,1,100,N,N,N,CP_Drtn,TT_Task,DT_FixedDUR2,RV_OK,TK_Complete,PK03BMUV05,03B MU292  2404-L - Civil Prod. V. Data,,,,0,0,0,0,280,0,0,0,,2006-04-19 00:00,2006-07-18 00:00,2007-12-31 08:01,2007-12-31 08:01,,2007-01-27 00:00,2007-01-27 00:00,,,2006-05-15 08:00,2006-06-30 17:00,,,,,PT_Normal,,,,,392kKmYuQg+sNgcuJTuhSQ,YRlCTM3zHkKoI3TuPOyGfQ,,,N,0,0,,,2007-02-01 02:43,2007-02-04 01:05,hbe4678,hbe4678,,,0
3262,12459443,14517,6816157,4047,1,100,N,N,N,CP_Drtn,TT_Task,DT_FixedDUR2,RV_OK,TK_Complete,PK03BMUV06,03B MU292  2404-L - E&I Prod. V. Data,,,,0,0,0,0,280,0,0,0,,2006-04-19 00:00,2006-07-18 00:00,2009-01-13 08:00,2009-01-13 08:00,,2007-01-27 00:00,2007-01-27 00:00,,,2006-05-15 08:00,2006-06-30 17:00,,,,,PT_Normal,,,,,DnVsZ3u1Qcmzn3yYm5JxzA,YRlCTM3zHkKoI3TuPOyGfQ,,,N,0,0,,,2007-02-01 02:43,2007-02-04 01:05,hbe4678,hbe4678,,,0
3263,12459444,14517,6816157,4047,1,100,N,N,N,CP_Drtn,TT_Task,DT_FixedDUR2,RV_OK,TK_Complete,PK03CMJV01,"03C MJ305  2205-J/JA,2206-J/JA - Piping Prod. V. Data",,,,0,0,0,0,280,0,0,0,,2006-01-30 08:00,2006-04-03 00:00,2007-05-08 08:00,2007-05-08 08:00,,2007-01-27 00:00,2007-01-27 00:00,,,2006-01-30 08:00,2006-03-17 17:00,,,,,PT_Normal,,,,,xOKi4+71QraMKP5OH9hBeA,6BqSpJ3H8Eu1RgtqwcviBA,,,N,0,0,,,2007-02-01 02:43,2007-02-04 01:05,hbe4678,hbe4678,,,0
3264,12459445,14517,6816157,4047,1,100,N,N,N,CP_Drtn,TT_Task,DT_FixedDUR2,RV_OK,TK_Complete,PK03CMJV02,"03C MJ305  2205-J/JA,2206-J/JA  - Civil Prod. V. Data",,,,0,0,0,0,280,0,0,0,,2006-01-30 08:00,2006-04-21 00:00,2007-10-22 17:00,2007-10-22 17:00,,2007-01-27 00:00,2007-01-27 00:00,,,2006-01-30 08:00,2006-03-17 17:00,,,,,PT_Normal,,,,,ujo11iqjTyybK6D1K4vl3A,6BqSpJ3H8Eu1RgtqwcviBA,,,N,0,0,,,2007-02-01 02:43,2007-02-04 01:05,hbe4678,hbe4678,,,0
3265,12459446,14517,6816157,4047,1,100,N,N,N,CP_Drtn,TT_Task,DT_FixedDUR2,RV_OK,TK_Complete,PK03CMJV03,"03C MJ305  2205-J/JA,2206-J/JA  - E&I Prod. V. Data",,,,0,0,0,0,280,0,0,0,,2006-01-30 08:00,2006-06-07 00:00,2009-01-13 08:00,2009-01-13 08:00,,2007-01-27 00:00,2007-01-27 00:00,,,2006-01-30 08:00,2006-03-17 17:00,,,,,PT_Normal,,,,,zzlP8vwdTQGL1JXRzzZ9bg,YPAI+fE1qkS9d1TOszXfQg,,,N,0,0,,,2007-02-01 02:43,2007-02-04 01:05,hbe4678,hbe4678,,,0
3266,12459447,14517,6816157,4047,1,100,N,N,N,CP_Drtn,TT_Task,DT_FixedDUR2,RV_OK,TK_Complete,PK03BMUV01,03B MU222  2401-J/JA - Piping Prod. V. Data,,,,0,0,0,0,280,0,0,0,,2006-01-30 08:00,2006-04-07 17:00,2007-07-09 08:00,2007-07-09 08:00,,2007-01-27 00:00,2007-01-27 00:00,,,2006-01-30 08:00,2006-03-17 17:00,,,,,PT_Normal,,,,,oEool6sISdGDhkLaLIIShQ,I7TeXlh+H0+lu4EMQlBFVA,,,N,0,0,,,2007-02-01 02:43,2007-02-04 01:05,hbe4678,hbe4678,,,0
3267,12459448,14517,6816157,4047,1,100,N,N,N,CP_Drtn,TT_Task,DT_FixedDUR2,RV_OK,TK_Complete,PK03BMUV02,03B MU222  2401-J/JA - Civil Prod. V. Data,,,,0,0,0,0,280,0,0,0,,2006-01-30 08:00,2006-04-07 17:00,2007-12-31 08:01,2007-12-31 08:01,,2007-01-27 00:00,2007-01-27 00:00,,,2006-01-30 08:00,2006-03-17 17:00,,,,,PT_Normal,,,,,D+wcHJZeSjmWh3saNlAKaQ,I7TeXlh+H0+lu4EMQlBFVA,,,N,0,0,,,2007-02-01 02:43,2007-02-04 01:05,hbe4678,hbe4678,,,0
3268,12459449,14517,6816157,4047,1,100,N,N,N,CP_Drtn,TT_Task,DT_FixedDUR2,RV_OK,TK_Complete,PK03BMUV03,"03B MU222,MJ305  2401-J/JA - E&I Prod. V. Data",,,,0,0,0,0,280,0,0,0,,2006-01-30 08:00,2006-05-25 00:00,2009-01-13 08:00,2009-01-13 08:00,,2007-01-27 00:00,2007-01-27 00:00,,,2006-01-30 08:00,2006-03-17 17:00,,,,,PT_Normal,,,,,FX9iBsheTBKy/t0R8abBPg,I7TeXlh+H0+lu4EMQlBFVA,,,N,0,0,,,2007-02-01 02:43,2007-02-04 01:05,hbe4678,hbe4678,,,0
3269,12459450,14517,6816157,4047,1,100,N,N,N,CP_Drtn,TT_Task,DT_FixedDUR2,RV_OK,TK_Complete,PK03FMUV01,03F MU222  2401-U - Piping Prod. V. Data,,,,0,0,0,0,280,0,0,0,,2006-01-30 08:00,2006-04-05 00:00,2007-05-10 08:01,2007-05-10 08:01,,2007-01-27 00:00,2007-01-27 00:00,,,2006-01-30 08:00,2006-03-17 17:00,,,,,PT_Normal,,,,,AiiCKqo6Qne9MMs8nNFXjA,rNsHqGPiUk+SBLp8q7xyOg,,,N,0,0,,,2007-02-01 02:43,2007-02-04 01:05,hbe4678,hbe4678,,,0
3270,12459451,14517,6816157,4047,1,100,N,N,N,CP_Drtn,TT_Task,DT_FixedDUR2,RV_OK,TK_Complete,PK03FMUV02,03F MU222  2401-U - Civil Prod. V. Data,,,,0,0,0,0,280,0,0,0,,2006-01-30 08:00,2006-04-05 00:00,2007-07-31 08:01,2007-07-31 08:01,,2007-01-27 00:00,2007-01-27 00:00,,,2006-01-30 08:00,2006-03-17 17:00,,,,,PT_Normal,,,,,lkWDjBrOR56bEWH9Hf3jCw,rNsHqGPiUk+SBLp8q7xyOg,,,N,0,0,,,2007-02-01 02:43,2007-02-04 01:05,hbe4678,hbe4678,,,0
3271,12459452,14517,6816157,4047,1,100,N,N,N,CP_Drtn,TT_Task,DT_FixedDUR2,RV_OK,TK_Complete,PK03FMUV03,03F MU222  2401-U - E&I Prod. V. Data,,,,0,0,0,0,280,0,0,0,,2006-01-30 08:00,2006-05-25 00:00,2009-01-13 08:00,2009-01-13 08:00,,2007-01-27 00:00,2007-01-27 00:00,,,2006-01-30 08:00,2006-03-17 17:00,,,,,PT_Normal,,,,,a7mxRLvkTL+Of7yG5if0Cw,rNsHqGPiUk+SBLp8q7xyOg,,,N,0,0,,,2007-02-01 02:43,2007-02-04 01:05,hbe4678,hbe4678,,,0
3272,12459453,14517,6816157,4047,1,100,N,N,N,CP_Drtn,TT_Task,DT_FixedDUR2,RV_OK,TK_Complete,PK03AMLV01,03A ML500  2003-L - Piping Prod. V. Data,,,,0,0,0,0,280,0,0,0,,2006-03-03 00:00,2006-07-25 00:00,2007-04-02 08:00,2007-04-02 08:00,,2007-01-27 00:00,2007-01-27 00:00,,,2006-05-05 16:59,2006-06-23 16:59,,,,,PT_Normal,,,,,MLkbPIHVSNCRZWrmdX47CQ,HSfikdBHC0SQ6IcQgDU1gA,,,N,0,0,,,2007-02-01 02:43,2007-02-04 01:05,hbe4678,hbe4678,,,0
3273,12459454,14517,6816157,4047,1,100,N,N,N,CP_Drtn,TT_Task,DT_FixedDUR2,RV_OK,TK_Complete,PK03AMLV02,03A ML500  2003-L - Civil Prod. V. Data,,,,0,0,0,0,280,0,0,0,,2006-03-03 00:00,2006-06-09 00:00,2007-07-26 08:00,2007-07-26 08:00,,2007-01-27 00:00,2007-01-27 00:00,,,2006-05-05 16:59,2006-06-23 16:59,,,,,PT_Normal,,,,,0Og86KXqT7uJ4cNkDvGpBA,HSfikdBHC0SQ6IcQgDU1gA,,,N,0,0,,,2007-02-01 02:43,2007-02-04 01:05,hbe4678,hbe4678,,,0
3274,12459455,14517,6816157,4047,1,100,N,N,N,CP_Drtn,TT_Task,DT_FixedDUR2,RV_OK,TK_Complete,PK03AMLV03,03A ML500  2003-L - E&I Prod. V. Data,,,,0,0,0,0,280,0,0,0,,2006-03-03 00:00,2006-11-27 17:00,2009-01-13 08:00,2009-01-13 08:00,,2007-01-27 00:00,2007-01-27 00:00,,,2006-05-05 16:59,2006-06-23 16:59,,,,,PT_Normal,,,,,qU9CfHBUSyOJcrmqIhS6sQ,HSfikdBHC0SQ6IcQgDU1gA,,,N,0,0,,,2007-02-01 02:43,2007-02-04 01:05,hbe4678,hbe4678,,,0
3275,12459456,14517,6816157,4047,1,100,N,N,N,CP_Drtn,TT_Task,DT_FixedDUR2,RV_OK,TK_Complete,PK03DMJV01,03D MJ305  2002-J/JA - Piping Prod. V. Data,,,,0,0,0,0,280,0,0,0,,2006-01-30 00:00,2006-06-02 17:00,2007-07-09 08:00,2007-07-09 08:00,,2007-01-27 00:00,2007-01-27 00:00,,,2006-03-27 08:00,2006-05-12 17:00,,,,,PT_Normal,,,,,IUnZiyD0QF2iMuzy2INBJQ,iJrlqLL/B02xGiAHLUrSuA,,,N,0,0,,,2007-02-01 02:43,2007-02-04 01:05,hbe4678,hbe4678,,,0
3276,12459457,14517,6816157,4047,1,100,N,N,N,CP_Drtn,TT_Task,DT_FixedDUR2,RV_OK,TK_Complete,PK03DMJV02,03D MJ305  2002-J/JA - Civil Prod. V. Data,,,,0,0,0,0,280,0,0,0,,2006-01-27 00:00,2006-06-02 17:00,2007-05-29 08:01,2007-05-29 08:01,,2007-01-27 00:00,2007-01-27 00:00,,,2006-03-27 08:00,2006-05-12 17:00,,,,,PT_Normal,,,,,jO+GdG88Rzisdukk+I6e/A,iJrlqLL/B02xGiAHLUrSuA,,,N,0,0,,,2007-02-01 02:43,2007-02-04 01:05,hbe4678,hbe4678,,,0
3277,12459458,14517,6816157,4047,1,100,N,N,N,CP_Drtn,TT_Task,DT_FixedDUR2,RV_OK,TK_Complete,PK03DMJV03,03D MJ305  2002-J/JA  - E&I Prod. V. Data,,,,0,0,0,0,280,0,0,0,,2006-01-30 00:00,2006-08-14 00:00,2009-01-13 08:00,2009-01-13 08:00,,2007-01-27 00:00,2007-01-27 00:00,,,2006-03-27 08:00,2006-05-12 17:00,,,,,PT_Normal,,,,,zBcBYesxRpCNVI4HlNnjQw,os7cuLSXUkOfEF0QDvc9Ag,,,N,0,0,,,2007-02-01 02:43,2007-02-04 01:05,hbe4678,hbe4678,,,0
3278,12459459,14517,6816157,13330,1,100,N,N,N,CP_Units,TT_Task,DT_FixedDUR2,RV_OK,TK_Complete,PK03BMJ154,"03B Recv. Planning V. Data - Pumps 2401-J, 2401-JA",,,,0,0,0,0,8,0,0,0,,2005-10-17 08:00,2005-10-17 17:00,2007-05-07 08:00,2007-05-07 08:00,,2007-01-27 00:00,2007-01-27 00:00,,,2005-10-17 08:00,2005-10-17 17:00,,,,,PT_Normal,,,,,8gwHCrgETI6kSgFVo/U5OQ,VKjuBksDJ0G8O+mld6edZh,,,N,0,0,,,2007-02-01 02:43,2007-02-04 01:05,hbe4678,hbe4678,,,0
3279,12459460,14517,6816157,13330,1,100,N,N,N,CP_Units,TT_Task,DT_FixedDUR2,RV_OK,TK_Complete,PK03BMU100,03B Recv. Planning V. Data - Utility Equip. 2401-J/JA,,,,0,0,0,0,160,0,0,0,,2006-04-15 00:00,2006-05-01 00:00,2007-05-07 08:00,2007-05-07 08:00,,2007-01-27 00:00,2007-01-27 00:00,,,2006-05-15 08:00,2006-06-09 17:00,,,,,PT_Normal,,,,,sLTjFS00Qj2C4OA63H3BhQ,Mng3KJMVN0uc3bJfU6fq1B,,,N,0,0,,,2007-02-01 02:43,2007-02-04 01:05,hbe4678,hbe4678,,,0
3280,12459461,14517,6816157,13330,1,100,N,N,N,CP_Units,TT_Task,DT_FixedDUR2,RV_OK,TK_Complete,PK03CMJ154,"03C Recv. Planning V. Data - Pumps 2205-J/JA, 2206-J/JA",,,,0,0,0,0,8,0,0,0,,2005-10-17 08:00,2005-10-17 17:00,2007-03-13 08:00,2007-03-13 08:00,,2007-01-27 00:00,2007-01-27 00:00,,,2005-10-17 08:00,2005-10-17 17:00,,,,,PT_Normal,,,,,8VyK/cGxQGOpPoTu9bIq5w,BqQdDKr8N0qUdGzI/R+Utx,,,N,0,0,,,2007-02-01 02:43,2007-02-04 01:05,hbe4678,hbe4678,,,0
3281,12459462,14517,6816157,13330,1,100,N,N,N,CP_Units,TT_Task,DT_FixedDUR2,RV_OK,TK_Complete,PK03DMJ154,03D Recv. Planning V. Data - Pumps 2202-J/JA,,,,0,0,0,0,8,0,0,0,,2005-10-17 08:00,2005-10-17 17:00,2007-03-13 08:00,2007-03-13 08:00,,2007-01-27 00:00,2007-01-27 00:00,,,2005-10-17 08:00,2005-10-17 17:00,,,,,PT_Normal,,,,,0c7iOo6JSZeouPxC2Dg4+w,kK70R98gFU6zuz6AHDOxWx,,,N,0,0,,,2007-02-01 02:43,2007-02-04 01:05,hbe4678,hbe4678,,,0
3282,12459463,14517,6816157,13330,1,100,N,N,N,CP_Units,TT_Task,DT_FixedDUR2,RV_OK,TK_Complete,PK03EMU100,03E Recv. Planning V. Data - Utility Equip.,,,,0,0,0,0,8,0,0,0,,2005-10-17 00:00,2005-10-17 00:00,2007-04-04 08:01,2007-04-04 08:01,,2007-01-27 00:00,2007-01-27 00:00,,,2005-11-16 08:00,2005-11-16 17:00,,,,,PT_Normal,,,,,lcgr70r8SPSsd526Q7ALhQ,z5kx+qZYaUOVzniVnq5P9x,,,N,0,0,,,2007-02-01 02:43,2007-02-04 01:05,hbe4678,hbe4678,,,0
3283,12459464,14517,6816157,4047,1,100,N,N,N,CP_Drtn,TT_Task,DT_FixedDUR2,RV_OK,TK_Complete,PK03EMUV01,03E MU330  2001-U - Piping Prod. V. Data,,,,0,0,0,0,280,0,0,0,,2006-01-30 08:00,2006-05-30 00:00,2007-05-07 08:00,2007-05-07 08:00,,2007-01-27 00:00,2007-01-27 00:00,,,2006-01-30 08:00,2006-03-17 17:00,,,,,PT_Normal,,,,,TKeSYHzoSIOg9CUNw3AIjA,rPwIK7JfsEeGp4LGg3bvjg,,,N,0,0,,,2007-02-01 02:43,2007-02-04 01:05,hbe4678,hbe4678,,,0
3284,12459465,14517,6816157,4047,1,100,N,N,N,CP_Drtn,TT_Task,DT_FixedDUR2,RV_OK,TK_Complete,PK03EMUV02,03E MU330  2001-U - Civil Prod. V. Data,,,,0,0,0,0,280,0,0,0,,2006-01-30 08:00,2006-05-30 00:00,2007-06-23 08:00,2007-06-23 08:00,,2007-01-27 00:00,2007-01-27 00:00,,,2006-01-30 08:00,2006-03-17 17:00,,,,,PT_Normal,,,,,kT8K9szCSYSzGyPzl7KJUg,rPwIK7JfsEeGp4LGg3bvjg,,,N,0,0,,,2007-02-01 02:43,2007-02-04 01:05,hbe4678,hbe4678,,,0
3285,12459466,14517,6816157,4047,1,100,N,N,N,CP_Drtn,TT_Task,DT_FixedDUR2,RV_OK,TK_Complete,PK03EMUV03,03E MU330  2001-U - E&I Prod. V. Data,,,,0,0,0,0,280,0,0,0,,2006-01-30 08:00,2006-06-16 17:00,2009-01-13 08:00,2009-01-13 08:00,,2007-01-27 00:00,2007-01-27 00:00,,,2006-01-30 08:00,2006-03-17 17:00,,,,,PT_Normal,,,,,KklnE84KQW6GiUBSdMFAGA,rPwIK7JfsEeGp4LGg3bvjg,,,N,0,0,,,2007-02-01 02:43,2007-02-04 01:05,hbe4678,hbe4678,,,0
3286,12459467,14517,6816157,4047,1,100,N,N,N,CP_Drtn,TT_Task,DT_FixedDUR2,RV_OK,TK_Complete,PK03FMUV04,03F MU410  2002-U - Piping Prod. V. Data,,,,0,0,0,0,280,0,0,0,,2006-01-30 08:00,2006-05-25 00:00,2007-05-10 08:01,2007-05-10 08:01,,2007-01-27 00:00,2007-01-27 00:00,,,2006-01-30 08:00,2006-03-17 17:00,,,,,PT_Normal,,,,,3AOAk6roQzmKN37cbRz6gw,9ORGqb46K0aHlVXD/ClTzA,,,N,0,0,,,2007-02-01 02:43,2007-02-04 01:05,hbe4678,hbe4678,,,0
3287,12459468,14517,6816157,4047,1,100,N,N,N,CP_Drtn,TT_Task,DT_FixedDUR2,RV_OK,TK_Complete,PK03FMUV05,03F MU410  2002-U - Civil Prod. V. Data,,,,0,0,0,0,280,0,0,0,,2006-01-30 08:00,2006-05-25 00:00,2007-07-31 08:01,2007-07-31 08:01,,2007-01-27 00:00,2007-01-27 00:00,,,2006-01-30 08:00,2006-03-17 17:00,,,,,PT_Normal,,,,,ZRY+0uEDRqiM0kjOAmzbkg,9ORGqb46K0aHlVXD/ClTzA,,,N,0,0,,,2007-02-01 02:43,2007-02-04 01:05,hbe4678,hbe4678,,,0
3288,12459469,14517,6816157,4047,1,100,N,N,N,CP_Drtn,TT_Task,DT_FixedDUR2,RV_OK,TK_Complete,PK03FMUV06,03F MU410  2002-U - E&I Prod. V. Data,,,,0,0,0,0,280,0,0,0,,2006-01-30 08:00,2006-07-25 00:00,2009-01-13 08:00,2009-01-13 08:00,,2007-01-27 00:00,2007-01-27 00:00,,,2006-01-30 08:00,2006-03-17 17:00,,,,,PT_Normal,,,,,h27X8dL+TWGJ7P8pv18lbA,9ORGqb46K0aHlVXD/ClTzA,,,N,0,0,,,2007-02-01 02:43,2007-02-04 01:05,hbe4678,hbe4678,,,0
3289,12459470,14517,6816158,13330,1,100,N,N,N,CP_Units,TT_Task,DT_FixedDUR2,RV_OK,TK_Complete,EK03FPI000,03F Preliminary Drawings for Supersketch U-2002,,,,0,0,0,0,8,0,0,0,,2005-08-03 00:00,2005-08-03 17:00,2007-03-13 08:00,2007-03-13 08:00,,2007-01-27 00:00,2007-01-27 00:00,,,2005-08-02 08:00,2005-08-02 17:00,,,,,PT_Normal,,,,,o3mpqFtYRjCGYcU6kp0iHg,dgMpkAlhWEKQl/ow5J+q6x,,,N,0,0,,,2007-02-01 02:43,2007-02-04 01:05,hbe4678,hbe4678,,,0
3290,12459471,14517,6816158,13331,1,0,N,N,N,CP_Units,TT_Task,DT_FixedDUR2,RV_OK,TK_NotStart,EK035BI145,05B OP's & Serv. Model Comments Resolution Approval,,600,0,24,0,0,0,24,0,0,0,,,,2007-06-26 08:00,2007-06-28 17:00,,2007-03-13 08:00,2007-03-15 17:00,2007-03-13 08:00,2007-03-15 17:00,2007-03-13 08:00,2007-03-15 17:00,,2007-06-26 08:00,2007-06-28 17:00,,PT_Normal,,,,,zyJm/JJsTL2HxXDWbeVbiw,aLbTiQzXn0qQkzXRQzBEFg,,,N,0,0,,,2007-02-01 02:43,2007-02-01 02:43,hbe4678,hbe4678,2007-03-13 08:00,2007-03-15 17:00,24
3291,12459472,14517,6816158,13331,1,100,N,N,N,CP_Units,TT_Task,DT_FixedDUR2,RV_OK,TK_Complete,EK05API144,05A OP's & Serv. Model Comments Resolution Approval,,,,0,0,0,0,16,0,0,0,,2006-09-29 08:00,2006-11-27 17:00,2007-06-08 17:00,2007-06-08 17:00,,2007-01-27 00:00,2007-01-27 00:00,,,2006-09-29 08:00,2006-10-02 17:00,,,,,PT_Normal,,,,,UeBXKCeXSl6ZDeGpBensvw,mXMMTLvzq0msN0jzdfD6zg,,,N,0,0,,,2007-02-01 02:43,2007-02-04 01:05,hbe4678,hbe4678,,,0
3292,12459473,14517,6816158,13330,1,100,N,N,N,CP_Units,TT_Task,DT_FixedDUR2,RV_OK,TK_Complete,EK030PI010,Develop Plot Plan & ID Areas - Utility Plant ICA,,,,0,0,0,0,160,0,0,0,,2005-04-22 08:00,2005-11-11 00:00,2007-03-13 08:00,2007-03-13 08:00,,2007-01-27 00:00,2007-01-27 00:00,,,2005-04-22 08:00,2005-05-19 17:00,,,,,PT_Normal,,,,,qc78DlyNQEyi2Bicvf/XaQ,,,,N,0,0,,,2007-02-01 02:43,2007-02-04 01:05,hbe4678,hbe4678,,,0
3293,12459474,14517,6816158,13330,1,100,N,N,N,CP_Drtn,TT_Task,DT_FixedDUR2,RV_OK,TK_Complete,EM03YPI021,03Y Model Review Comment Resolution,,,,0,0,0,0,24,0,0,0,,2006-06-14 00:00,2006-07-14 00:00,2007-03-13 08:00,2007-03-13 08:00,,2007-01-27 00:00,2007-01-27 00:00,,,2006-06-15 08:00,2006-06-19 17:00,,,,,PT_Normal,,,,,k+vRpSRmQwyADiUquqn1yQ,,,,N,0,0,,,2007-02-01 02:43,2007-02-04 01:05,hbe4678,hbe4678,,,0
3294,12459475,14517,6816158,13331,1,100,N,N,N,CP_Units,TT_Task,DT_FixedDUR2,RV_OK,TK_Complete,EK03FPI144,03F OP's & Serv. Model Comment Resolution Approval,,,,0,0,0,0,136,0,0,0,,2006-09-11 00:00,2006-09-25 17:00,2007-08-07 08:01,2007-08-07 08:01,,2007-01-27 00:00,2007-01-27 00:00,,,2006-09-14 08:00,2006-10-06 17:00,,,,,PT_Normal,,,,,7NF8SRruRiKiCDTHzC3Zgg,9JffYidpnUW+ckuv1V+hyA,,,N,0,0,,,2007-02-01 02:43,2007-02-04 01:05,hbe4678,hbe4678,,,0
3295,12459476,14517,6816158,13331,1,100,N,N,N,CP_Units,TT_Task,DT_FixedDUR2,RV_OK,TK_Complete,EK03EPI144,03E OP's & Serv. Model Comment Resolution Approval,,,,0,0,0,0,40,0,0,0,,2006-10-11 08:01,2006-12-20 17:00,2007-04-04 08:01,2007-04-04 08:01,,2007-01-27 00:00,2007-01-27 00:00,,,2006-10-11 08:01,2006-10-18 08:01,,,,,PT_Normal,,,,,jrFPa9yGQ0O14o9WrydE8w,2q7Rg2SQzUSQHlI874R3Dg,,,N,0,0,,,2007-02-01 02:43,2007-02-04 01:05,hbe4678,hbe4678,,,0
3296,12459477,14517,6816158,13331,1,100,N,N,N,CP_Units,TT_Task,DT_FixedDUR2,RV_OK,TK_Complete,EK03DPI145,03D OP's & Serv. Model Comments Resolution Approval,,,,0,0,0,0,24,0,0,0,,2006-08-18 00:00,2006-08-18 00:00,2007-08-21 08:01,2007-08-21 08:01,,2007-01-27 00:00,2007-01-27 00:00,,,2006-08-21 08:00,2006-08-23 17:00,,,,,PT_Normal,,,,,FC2/ydKoQZSqTzfl/JqD6Q,ei1u9okvjUCqCzLr1/G1Vg,,,N,0,0,,,2007-02-01 02:43,2007-02-04 01:05,hbe4678,hbe4678,,,0
3297,12459478,14517,6816158,13331,1,100,N,N,N,CP_Units,TT_Task,DT_FixedDUR2,RV_OK,TK_Complete,EK03YPI144,03Y OP's & Serv. Model Comments Resolution Approval,,,,0,0,0,0,16,0,0,0,,2006-09-11 08:00,2006-09-25 17:00,2007-04-30 08:00,2007-04-30 08:00,,2007-01-27 00:00,2007-01-27 00:00,,,2006-09-11 08:00,2006-09-12 17:00,,,,,PT_Normal,,,,,CvOt8IArTg+aB+bES36kbA,aLbTiQzXn0qQkzXRQzBEFg,,,N,0,0,,,2007-02-01 02:43,2007-02-04 01:05,hbe4678,hbe4678,,,0
3298,12459479,14517,6816158,13331,1,100,N,N,N,CP_Units,TT_Task,DT_FixedDUR2,RV_OK,TK_Complete,EK03BPI143,03B OP's & Serv. Model Comment Resolution Approval,,,,0,0,0,0,40,0,0,0,,2006-09-01 08:00,2006-09-07 17:00,2007-08-12 08:01,2007-08-12 08:01,,2007-01-27 00:00,2007-01-27 00:00,,,2006-09-01 08:00,2006-09-07 17:00,,,,,PT_Normal,,,,,1stHd6JTR5elrfrP7XR1yw,hw53TRnF90WzzIOUsn7QVR,,,N,0,0,,,2007-02-01 02:43,2007-02-04 01:05,hbe4678,hbe4678,,,0
3299,12459480,14517,6816158,13331,1,100,N,N,N,CP_Units,TT_Task,DT_FixedDUR2,RV_OK,TK_Complete,EK03API143,03A OP's & Serv. Model Comment Resolution Approval,,,,0,0,0,0,40,0,0,0,,2006-09-12 00:00,2006-09-14 00:00,2007-08-13 08:01,2007-08-13 08:01,,2007-01-27 00:00,2007-01-27 00:00,,,2006-09-15 08:00,2006-09-21 17:00,,,,,PT_Normal,,,,,+ePDyRcyTUG6E+D4LnZwqQ,UV5EraYv5EOub1ONYN2iOR,,,N,0,0,,,2007-02-01 02:43,2007-02-04 01:05,hbe4678,hbe4678,,,0
3300,12459481,14517,6816158,13331,1,100,N,N,N,CP_Units,TT_Task,DT_FixedDUR2,RV_OK,TK_Complete,EK03CPI143,03C OP's & Serv. Model Comment Resolution Approval,,,,0,0,0,0,40,0,0,0,,2006-06-15 00:00,2006-06-26 17:00,2007-05-08 08:00,2007-05-08 08:00,,2007-01-27 00:00,2007-01-27 00:00,,,2006-06-19 08:00,2006-06-23 17:00,,,,,PT_Normal,,,,,gUGouUCaQw6whruqGzi80w,+HgImJhDi0m/faehL9wWHx,,,N,0,0,,,2007-02-01 02:43,2007-02-04 01:05,hbe4678,hbe4678,,,0
3301,12459482,14517,6816158,13330,1,100,N,N,N,CP_Units,TT_Task,DT_FixedDUR2,RV_OK,TK_Complete,EK000PI140,Eqvlnt Line Counts / Planning Area-Utility Plant,,,,0,,0,,80,,,0,,2005-04-04 08:00,2005-04-08 17:00,2009-02-15 08:01,2009-02-15 08:01,,2007-01-27 00:00,2007-01-27 00:00,,,2005-04-04 08:00,2005-04-15 17:00,,,,,PT_Normal,,,,,7DGWrp1WRtSyYL7osfoWOA,,,,N,,,,,2007-02-01 02:43,2007-02-04 01:05,hbe4678,hbe4678,,,0
3302,12459483,14517,6816158,13330,1,100,N,N,N,CP_Units,TT_Task,DT_FixedDUR2,RV_OK,TK_Complete,EK030PI005,Develop Plot Plan & ID Areas - Utility Plant IFI,,,,0,,0,,80,,,0,,2005-04-01 08:00,2005-04-08 17:00,2006-12-25 08:00,2006-12-25 08:00,,2007-01-27 00:00,2007-01-27 00:00,,,2005-04-01 08:00,2005-04-14 17:00,,,,,PT_Normal,,,,,LKBuMy4aROawOEEAZWosXA,,,,N,,,,,2007-02-01 02:43,2007-02-04 01:05,hbe4678,hbe4678,,,0
3303,12459484,14517,6816158,13330,1,100,N,N,N,CP_Units,TT_Task,DT_FixedDUR2,RV_OK,TK_Complete,EK030PI011,Plot Plan - Utility Plant Client ICA Approval,,,,0,0,0,0,80,0,0,0,,2005-10-10 00:00,2005-10-28 00:00,2007-03-13 08:00,2007-03-13 08:00,,2007-01-27 00:00,2007-01-27 00:00,,,2005-10-31 08:00,2005-11-11 17:00,,,,,PT_Normal,,,,,uR0h8JoWSky12YBQmV8ccA,YGbjM5mvW0SBLoQDWP5G/B,,,N,0,0,,,2007-02-01 02:43,2007-02-04 01:05,hbe4678,hbe4678,,,0
3304,12459485,14517,6816158,13330,1,100,N,N,N,CP_Units,TT_Task,DT_FixedDUR2,RV_OK,TK_Complete,EK03FPI050,03F Model Comment Resolution Approval,,,,0,0,0,0,24,0,0,0,,2006-07-28 00:00,2006-07-31 00:00,2007-05-07 08:00,2007-05-07 08:00,,2007-01-27 00:00,2007-01-27 00:00,,,2006-08-07 08:00,2006-08-09 17:00,,,,,PT_Normal,,,,,wEy9nDdXTv++aewzXm6KEg,bhReOu0hdkGJekV5CfR9XB,,,N,0,0,,,2007-02-01 02:43,2007-02-04 01:05,hbe4678,hbe4678,,,0
3305,12459486,14517,6816158,13330,1,100,N,N,N,CP_Units,TT_Task,DT_FixedDUR2,RV_OK,TK_Complete,EK03FPI030,03F Conceptual Layout - Supersketches (Need Dwgs),,,,0,0,0,0,40,0,0,0,,2005-12-08 00:00,2006-03-03 17:00,2007-03-13 08:00,2007-03-13 08:00,,2007-01-27 00:00,2007-01-27 00:00,,,2005-12-13 08:00,2005-12-19 17:00,,,,,PT_Normal,,,,,g28X4pZnTl2nAUwCIi0iCw,jViOJ+HTMUGy3j44p8KzUR,,,N,0,0,,,2007-02-01 02:43,2007-02-04 01:05,hbe4678,hbe4678,,,0
3306,12459487,14517,6816158,13330,1,100,N,N,N,CP_Units,TT_Task,DT_FixedDUR2,RV_OK,TK_Complete,EK03API030,03A Conceptual Layout - Supersketches,,,,0,0,0,0,24,0,0,0,,2005-08-15 00:00,2005-08-22 00:00,2007-03-13 08:00,2007-03-13 08:00,,2007-01-27 00:00,2007-01-27 00:00,,,2005-08-08 08:00,2005-08-10 17:00,,,,,PT_Normal,,,,,cIwJa1iCTg2WW+/QRibwBw,iMhoRFQ1j0We2TZ0UeAQnh,,,N,0,0,,,2007-02-01 02:43,2007-02-04 01:05,hbe4678,hbe4678,,,0
3307,12459488,14517,6816158,13330,1,100,N,N,N,CP_Units,TT_Task,DT_FixedDUR2,RV_OK,TK_Complete,EK03API050,03A Model Comment Resolution Approval,,,,0,0,0,0,24,0,0,0,,2006-06-05 00:00,2006-07-24 00:00,2007-04-02 08:00,2007-04-02 08:00,,2007-01-27 00:00,2007-01-27 00:00,,,2006-06-15 08:00,2006-06-19 17:00,,,,,PT_Normal,,,,,3+K699emSpmFxSOwrdwUFg,XlYRjtkxoE6UeZ9wG2Lqqx,,,N,0,0,,,2007-02-01 02:43,2007-02-04 01:05,hbe4678,hbe4678,,,0
3308,12459489,14517,6816158,13330,1,100,N,N,N,CP_Units,TT_Task,DT_FixedDUR2,RV_OK,TK_Complete,EK03BPI030,03B Conceptual Layout - Supersketches,,,,0,0,0,0,48,0,0,0,,2005-11-03 00:00,2005-11-07 00:00,2007-05-07 08:00,2007-05-07 08:00,,2007-01-27 00:00,2007-01-27 00:00,,,2005-11-07 08:00,2005-11-14 17:00,,,,,PT_Normal,,,,,ZiDlT+yjS9eroMJev9XzAA,iMhoRFQ1j0We2TZ0UeAQnh,,,N,0,0,,,2007-02-01 02:43,2007-02-04 01:05,hbe4678,hbe4678,,,0
3309,12459490,14517,6816158,13330,1,100,N,N,N,CP_Units,TT_Task,DT_FixedDUR2,RV_OK,TK_Complete,EK03BPI050,03B Model Comment Resolution Approval,,,,0,0,0,0,24,0,0,0,,2006-06-12 08:00,2006-07-20 00:00,2007-05-07 08:00,2007-05-07 08:00,,2007-01-27 00:00,2007-01-27 00:00,,,2006-06-12 08:00,2006-06-14 17:00,,,,,PT_Normal,,,,,0u5MhBY1SwepXYupr8n2Zw,XlYRjtkxoE6UeZ9wG2Lqqx,,,N,0,0,,,2007-02-01 02:43,2007-02-04 01:05,hbe4678,hbe4678,,,0
3310,12459491,14517,6816158,13330,1,100,N,N,N,CP_Units,TT_Task,DT_FixedDUR2,RV_OK,TK_Complete,EK03CPI030,03C Conceptual Layout - Supersketches,,,,0,0,0,0,40,0,0,0,,2005-10-24 00:00,2005-10-28 00:00,2007-03-13 08:00,2007-03-13 08:00,,2007-01-27 00:00,2007-01-27 00:00,,,2005-10-31 08:00,2005-11-04 17:00,,,,,PT_Normal,,,,,gYAktCxcQe6rGWD9kt0xgQ,kQqnb/OvuEO68MTxnGUzwh,,,N,0,0,,,2007-02-01 02:43,2007-02-04 01:05,hbe4678,hbe4678,,,0
3311,12459492,14517,6816158,13330,1,100,N,N,N,CP_Units,TT_Task,DT_FixedDUR2,RV_OK,TK_Complete,EK03CPI050,03C Model Comment Resolution Approval,,,,0,0,0,0,24,0,0,0,,2006-04-04 08:00,2006-04-06 17:00,2007-05-08 08:00,2007-05-08 08:00,,2007-01-27 00:00,2007-01-27 00:00,,,2006-04-04 08:00,2006-04-06 17:00,,,,,PT_Normal,,,,,DFasyRNdTFeqWihHwG9bgw,BQ3oo8bgG065ad5PFdFwdx,,,N,0,0,,,2007-02-01 02:43,2007-02-04 01:05,hbe4678,hbe4678,,,0
3312,12459493,14517,6816158,13330,1,100,N,N,N,CP_Units,TT_Task,DT_FixedDUR2,RV_OK,TK_Complete,EK03DPI030,03D Conceptual Layout - Supersketches,,,,0,0,0,0,40,0,0,0,,2005-08-31 08:00,2005-09-06 17:00,2007-03-13 08:00,2007-03-13 08:00,,2007-01-27 00:00,2007-01-27 00:00,,,2005-08-31 08:00,2005-09-06 17:00,,,,,PT_Normal,,,,,HhPDSyaISNqkX5Du68661w,dAxFfdn5Okyr3GWO3qdRER,,,N,0,0,,,2007-02-01 02:43,2007-02-04 01:05,hbe4678,hbe4678,,,0
3313,12459494,14517,6816158,13330,1,100,N,N,N,CP_Units,TT_Task,DT_FixedDUR2,RV_OK,TK_Complete,EK03DPI050,03D Model Comment Resolution Approval,,,,0,0,0,0,24,0,0,0,,2006-03-20 08:00,2006-04-05 17:00,2007-05-21 08:01,2007-05-21 08:01,,2007-01-27 00:00,2007-01-27 00:00,,,2006-03-20 08:00,2006-03-22 17:00,,,,,PT_Normal,,,,,ARh60MpRSEuTsrHbeVFHQQ,g3uOqL6aPkuNwRMbxN/K3x,,,N,0,0,,,2007-02-01 02:43,2007-02-04 01:05,hbe4678,hbe4678,,,0
3314,12459495,14517,6816158,13330,1,100,N,N,N,CP_Units,TT_Task,DT_FixedDUR2,RV_OK,TK_Complete,EK03EPI030,03E Conceptual Layout - Supersketches,,,,0,0,0,0,200,0,0,0,,2006-01-16 08:00,2006-05-01 00:00,2007-04-04 08:01,2007-04-04 08:01,,2007-01-27 00:00,2007-01-27 00:00,,,2006-01-16 08:00,2006-02-17 17:00,,,,,PT_Normal,,,,,+RGSKJqNTl2s5nj/YB73Ag,86xuSHzWzkOBnTNLRw8y1h,,,N,0,0,,,2007-02-01 02:43,2007-02-04 01:05,hbe4678,hbe4678,,,0
3315,12459496,14517,6816158,13330,1,100,N,N,N,CP_Units,TT_Task,DT_FixedDUR2,RV_OK,TK_Complete,EK03EPI050,03E Model Comment Resolution Approval,,,,0,0,0,0,24,0,0,0,,2006-07-24 00:00,2006-08-23 00:00,2007-04-04 08:01,2007-04-04 08:01,,2007-01-27 00:00,2007-01-27 00:00,,,2006-07-17 08:00,2006-07-19 17:00,,,,,PT_Normal,,,,,+sc2oFWRR9yvMUV5z9/lEw,4rflDn5eCUO6kEX/yKlNAR,,,N,0,0,,,2007-02-01 02:43,2007-02-04 01:05,hbe4678,hbe4678,,,0
3316,12459497,14517,6816158,13330,1,100,N,N,N,CP_Units,TT_Task,DT_FixedDUR2,RV_OK,TK_Complete,EK03YPI050,03Y Model Comment Resolution Approval,,,,0,0,0,0,16,0,0,0,,2006-07-24 08:00,2006-07-28 17:00,2007-03-13 08:00,2007-03-13 08:00,,2007-01-27 00:00,2007-01-27 00:00,,,2006-07-24 08:00,2006-07-25 17:00,,,,,PT_Normal,,,,,wixUYdX7SzC54ri5e/ZMcQ,nmk1g6x78EWUJXYOAZq4WB,,,N,0,0,,,2007-02-01 02:43,2007-02-04 01:05,hbe4678,hbe4678,,,0
3317,12459498,14517,6816158,13330,1,100,N,N,N,CP_Units,TT_Task,DT_FixedDUR2,RV_OK,TK_Complete,EK03UPIFWA,03U Plant Layout Model   - Firewater,,,,0,0,0,0,240,0,0,0,,2005-09-22 00:00,2005-11-04 17:00,2007-03-13 08:00,2007-03-13 08:00,,2007-01-27 00:00,2007-01-27 00:00,,,2005-08-15 08:00,2005-09-23 17:00,,,,,PT_Normal,,,,,m5H68t9bR5WWOJwxK0bO6A,s6kFznqCr02UC2IrYfBUZB,,,N,0,0,,,2007-02-01 02:43,2007-02-04 01:05,hbe4678,hbe4678,,,0
3318,12459499,14517,6816158,13330,1,100,N,N,N,CP_Units,TT_Task,DT_FixedDUR2,RV_OK,TK_Complete,EK03UPIASA,03U Plant Layout Model   - Acid Sewer,,,,0,0,0,0,80,0,0,0,,2005-10-21 00:00,2005-11-07 17:00,2007-03-13 08:00,2007-03-13 08:00,,2007-01-27 00:00,2007-01-27 00:00,,,2005-10-31 08:00,2005-11-11 17:00,,,,,PT_Normal,,,,,DGVTzoPGRGa3zvlJYN3Tpw,wBoOkkKZjki5bAW/sycK9x,,,N,0,0,,,2007-02-01 02:43,2007-02-04 01:05,hbe4678,hbe4678,,,0
3319,12459500,14517,6816158,13330,1,100,N,N,N,CP_Units,TT_Task,DT_FixedDUR2,RV_OK,TK_Complete,EK03UPIOSA,03U Plant Layout Model   - Outfall Sewer,,,,0,0,0,0,40,0,0,0,,2005-10-17 08:00,2005-10-26 17:00,2007-03-13 08:00,2007-03-13 08:00,,2007-01-27 00:00,2007-01-27 00:00,,,2005-10-17 08:00,2005-10-21 17:00,,,,,PT_Normal,,,,,mLP5O62hR8Gmpk0QGH92LA,2/3xkOQJRE+vooEX9xBhtB,,,N,0,0,,,2007-02-01 02:43,2007-02-04 01:05,hbe4678,hbe4678,,,0
3320,12459501,14517,6816158,13330,1,100,N,N,N,CP_Units,TT_Task,DT_FixedDUR2,RV_OK,TK_Complete,EK030PI012,Plot Plan - Utility Plant Issue IPL,,,,0,0,0,0,240,0,0,0,,2005-12-29 00:00,2006-01-20 00:00,2007-03-13 08:00,2007-03-13 08:00,,2007-01-27 00:00,2007-01-27 00:00,,,2006-02-27 08:00,2006-04-07 17:00,,,,,PT_Normal,,,,,UucR7iUHT72POFS0BiUCEQ,,,,N,0,0,,,2007-02-01 02:43,2007-02-04 01:05,hbe4678,hbe4678,,,0
3321,12459502,14517,6816158,13330,1,100,N,N,N,CP_Units,TT_Task,DT_FixedDUR2,RV_OK,TK_Complete,EK03UPICSA,03U Plant Layout Model   - Caustic Sewer,,,,0,0,0,0,80,0,0,0,,2005-10-21 00:00,2005-11-07 17:00,2007-03-13 08:00,2007-03-13 08:00,,2007-01-27 00:00,2007-01-27 00:00,,,2005-10-31 08:00,2005-11-11 17:00,,,,,PT_Normal,,,,,xRXp44fyTXqPvE6UZkeLPg,E4e2Ni1sbU2PG5jlP768cx,,,N,0,0,,,2007-02-01 02:43,2007-02-04 01:05,hbe4678,hbe4678,,,0
3322,12459503,14517,6816158,13330,1,100,N,N,N,CP_Units,TT_Task,DT_FixedDUR2,RV_OK,TK_Complete,EK03API000,03A Preliminary Drawings for Supersketch L-2003,,,,0,0,0,0,8,0,0,0,,2005-08-12 08:00,2005-08-12 17:00,2007-03-13 08:00,2007-03-13 08:00,,2007-01-27 00:00,2007-01-27 00:00,,,2005-08-12 08:00,2005-08-12 17:00,,,,,PT_Normal,,,,,eYMRxUChSQ2FG21h2DZXpQ,IyjT8dQkDE2eg/sdgaXfqx,,,N,0,0,,,2007-02-01 02:43,2007-02-04 01:05,hbe4678,hbe4678,,,0
3323,12459504,14517,6816161,13330,0,100,N,N,N,CP_Units,TT_FinMile,DT_FixedDUR2,RV_OK,TK_Complete,EK03CSY170,03C OSBL P&IDs IPL & Line List Issue Milestone,,,,0,0,0,0,0,0,0,0,,2005-12-20 00:00,2005-12-20 00:00,2007-05-08 08:00,2007-05-08 08:00,,2007-01-27 00:00,2007-01-27 00:00,,,2005-12-30 17:00,2005-12-30 17:00,,,,,PT_Normal,,,,,pBCxKKtPQUCf9hSIObyojg,z+OVTsUsnE+OEIMvleLnUB,,,N,0,0,,,2007-02-01 02:43,2007-02-04 01:05,hbe4678,hbe4678,,,0
3324,12459505,14517,6816161,13330,0,100,N,N,N,CP_Units,TT_FinMile,DT_FixedDUR2,RV_OK,TK_Complete,EK03DSY170,03D OSBL P&IDs IPL & Line List Issue Milestone,,,,0,0,0,0,0,0,0,0,,2005-12-20 00:00,2005-12-20 00:00,2007-03-13 08:00,2007-03-13 08:00,,2007-01-27 00:00,2007-01-27 00:00,,,2005-12-30 17:00,2005-12-30 17:00,,,,,PT_Normal,,,,,88SAcJeVRMWg+vG2KAw5og,H9XjHIfp2kmrRqwSoKybMR,,,N,0,0,,,2007-02-01 02:43,2007-02-04 01:05,hbe4678,hbe4678,,,0
3325,12459506,14517,6816161,13330,0,100,N,N,N,CP_Units,TT_FinMile,DT_FixedDUR2,RV_OK,TK_Complete,EK03ESY170,03E OSBL P&IDs IPL & Line List Issue Milestone,,,,0,0,0,0,0,0,0,0,,2005-12-20 00:00,2005-12-20 00:00,2007-04-04 08:01,2007-04-04 08:01,,2007-01-27 00:00,2007-01-27 00:00,,,2005-12-30 17:00,2005-12-30 17:00,,,,,PT_Normal,,,,,Bm//zKi9RGetCFPPovTNcg,bOQ6LoPalESz1D3iyVLT+R,,,N,0,0,,,2007-02-01 02:43,2007-02-04 01:05,hbe4678,hbe4678,,,0
3326,12459507,14517,6816161,13330,0,100,N,N,N,CP_Units,TT_FinMile,DT_FixedDUR2,RV_OK,TK_Complete,EK03YSY170,03Y OSBL P&IDs IPL & Line List Issue Milestone,,,,0,0,0,0,0,0,0,0,,2005-12-20 00:00,2005-12-20 00:00,2007-03-13 08:00,2007-03-13 08:00,,2007-01-27 00:00,2007-01-27 00:00,,,2005-12-30 17:00,2005-12-30 17:00,,,,,PT_Normal,,,,,SlGXTLqlQNWbMu/Had0TVw,avItg2ujPkOuudiC7tBk+h,,,N,0,0,,,2007-02-01 02:43,2007-02-04 01:05,hbe4678,hbe4678,,,0
3327,12459508,14517,6816161,13330,1,100,N,N,N,CP_Units,TT_Task,DT_FixedDUR2,RV_OK,TK_Complete,EK030SY135,030 Utility Plant CV & FE Process Data,,,,0,0,0,0,160,0,0,0,,2005-07-22 00:00,2005-10-07 17:00,2007-01-09 08:01,2007-01-09 08:01,,2007-01-27 00:00,2007-01-27 00:00,,,2005-08-22 08:00,2005-09-16 17:00,,,,,PT_Normal,,,,,P/hHuQcVRj6/obI69GhkOw,mjomlTx1s0Ov0cgGpaOS+B,,,N,0,0,,,2007-02-01 02:43,2007-02-04 01:05,hbe4678,hbe4678,,,0
3328,12459509,14517,6816161,13330,1,100,N,N,N,CP_Units,TT_Task,DT_FixedDUR2,RV_OK,TK_Complete,EK030SY185,030 SP Item Data Sheets - Utiliy Plant,,,,0,0,0,0,80,0,0,0,,2005-10-27 08:00,2006-01-24 00:00,2007-03-13 08:00,2007-03-13 08:00,,2007-01-27 00:00,2007-01-27 00:00,,,2005-10-27 08:00,2005-11-09 17:00,,,,,PT_Normal,,,,,cJD3uJdkT3G5P7MkWyCO4g,dDGs3WjkwEOpfibOoNjDih,,,N,0,0,,,2007-02-01 02:43,2007-02-04 01:05,hbe4678,hbe4678,,,0
3329,12459510,14517,6816161,13330,1,100,N,N,N,CP_Units,TT_Task,DT_FixedDUR2,RV_OK,TK_Complete,EK030SY150,030 Relief Valve Calculations - Utility Plant,,,,0,0,0,0,120,0,0,0,,2005-09-09 08:01,2005-10-26 17:00,2007-03-13 08:00,2007-03-13 08:00,,2007-01-27 00:00,2007-01-27 00:00,,,2005-09-09 08:01,2005-09-30 08:01,,,,,PT_Normal,,,,,ynDB05dWTGC6LbGMnJiL+Q,6tXjFxEihUyoKm2xNZxtHh,,,N,0,0,,,2007-02-01 02:43,2007-02-04 01:05,hbe4678,hbe4678,,,0
3330,12459511,14517,6816161,13330,1,100,N,N,N,CP_Units,TT_Task,DT_FixedDUR2,RV_OK,TK_Complete,EK030SY155,030 Issue  Requisition - PSA08 Relief Valves - Utility PLant,,,,0,0,0,0,40,0,0,0,,2005-11-04 08:01,2005-12-20 00:00,2008-01-23 08:01,2008-01-23 08:01,,2007-01-27 00:00,2007-01-27 00:00,,,2005-11-04 08:01,2005-11-11 08:01,,,,,PT_Normal,,,,,VgBIgXAXQxOxVVzgFQ2N+g,qUivBRdCoEqZBpUIg96enR,,,N,0,0,,,2007-02-01 02:43,2007-02-04 01:05,hbe4678,hbe4678,,,0
3331,12459512,14517,6816161,13330,1,100,N,N,N,CP_Units,TT_Task,DT_FixedDUR2,RV_OK,TK_Complete,EK030SY020,030 Utility Plant P&ID development IDR Issue,,,,0,0,0,0,168,0,0,0,,2005-05-06 08:00,2005-05-26 00:00,2007-01-09 08:01,2007-01-09 08:01,,2007-01-27 00:00,2007-01-27 00:00,,,2005-05-06 08:00,2005-06-06 17:00,,,,,PT_Normal,,,,,AvpM923xT9aBBpNF/o/zlA,zrilwGWXxka5Z3aKiUWdgR,,,N,0,0,,,2007-02-01 02:43,2007-02-04 01:05,hbe4678,hbe4678,,,0
3332,12459513,14517,6816161,13330,1,100,N,N,N,CP_Units,TT_Task,DT_FixedDUR2,RV_OK,TK_Complete,EK030SY030,030 Utility Plant P&ID IDR Meeting milestone,,,,0,0,0,0,16,0,0,0,,2005-06-01 08:00,2005-06-02 17:00,2007-01-09 08:01,2007-01-09 08:01,,2007-01-27 00:00,2007-01-27 00:00,,,2005-06-01 08:00,2005-06-02 17:00,,,,,PT_Normal,,,,,MIOEllyZQJSa/Y9cM7PQmg,LgcADgILm0aBnzl6qlA9ih,,,N,0,0,,,2007-02-01 02:43,2007-02-04 01:05,hbe4678,hbe4678,,,0
3333,12459514,14517,6816161,13330,1,100,N,N,N,CP_Units,TT_Task,DT_FixedDUR2,RV_OK,TK_Complete,EK030SY040,030 Utility Plant P&IDs - ICA Issue development,,,,0,0,0,0,272,0,0,0,,2005-06-03 08:00,2005-07-21 00:00,2007-01-09 08:01,2007-01-09 08:01,,2007-01-27 00:00,2007-01-27 00:00,,,2005-06-03 08:00,2005-07-22 17:00,,,,,PT_Normal,,,,,1C0ali+LTHqZz1v7P9FaOg,F0nzOXKgrkeojXf3pJZAmh,,,N,0,0,,,2007-02-01 02:43,2007-02-04 01:05,hbe4678,hbe4678,,,0
3334,12459515,14517,6816161,13330,0,100,N,N,N,CP_Units,TT_FinMile,DT_FixedDUR2,RV_OK,TK_Complete,EK030SY050,030 Utility Plant P&IDs - ICA Issue Milestone,,,,0,0,0,0,0,0,0,0,,2005-07-21 00:00,2005-07-21 00:00,2007-01-09 08:01,2007-01-09 08:01,,2007-01-27 00:00,2007-01-27 00:00,,,2005-07-22 17:00,2005-07-22 17:00,,,,,PT_Normal,,,,,V7BU1QfITWynYf50IRuNXg,YdjISTCxsUajPhTKVt9Zyx,,,N,0,0,,,2007-02-01 02:43,2007-02-04 01:05,hbe4678,hbe4678,,,0
3335,12459516,14517,6816161,13330,1,100,N,N,N,CP_Units,TT_Task,DT_FixedDUR2,RV_OK,TK_Complete,EK030SY060,030 Utility Plant P&ID's - IPL Issue Development,,,,0,0,0,0,440,0,0,0,,2005-07-25 08:00,2005-12-20 00:00,2007-03-13 08:00,2007-03-13 08:00,,2007-01-27 00:00,2007-01-27 00:00,,,2005-07-25 08:00,2005-10-07 17:00,,,,,PT_Normal,,,,,iNItW3fARliJx2L0SDJJ9g,STDYtwqeWkio8Z5wa/JKYh,,,N,0,0,,,2007-02-01 02:43,2007-02-04 01:05,hbe4678,hbe4678,,,0
3336,12459517,14517,6816161,13330,0,100,N,N,N,CP_Units,TT_FinMile,DT_FixedDUR2,RV_OK,TK_Complete,EK030SY090,030 Utility Plant P&IDs IPL Issue Milestone,,,,0,0,0,0,0,0,0,0,,2005-12-20 00:00,2005-12-20 00:00,2007-03-13 08:00,2007-03-13 08:00,,2007-01-27 00:00,2007-01-27 00:00,,,2005-12-30 17:00,2005-12-30 17:00,,,,,PT_Normal,,,,,9PsQb0qsTmW/0qtE2eFJWg,Qdmc4f2rnEOEon9mSDcTex,,,N,0,0,,,2007-02-01 02:43,2007-02-04 01:05,hbe4678,hbe4678,,,0
3337,12459518,14517,6816161,13330,0,100,N,N,N,CP_Units,TT_FinMile,DT_FixedDUR2,RV_OK,TK_Complete,EK03FSY170,03F OSBL P&IDs IPL & Line List Issue Milestone,,,,0,0,0,0,0,0,0,0,,2005-12-20 00:00,2005-12-20 00:00,2007-10-27 08:01,2007-10-27 08:01,,2007-01-27 00:00,2007-01-27 00:00,,,2006-02-21 17:00,2006-02-21 17:00,,,,,PT_Normal,,,,,AtepRIRwTWOFx3MaY70Phg,4wS8iBcO0EqLsZzGgpCmmx,,,N,0,0,,,2007-02-01 02:43,2007-02-04 01:05,hbe4678,hbe4678,,,0
3338,12459519,14517,6816161,13330,0,100,N,N,N,CP_Units,TT_FinMile,DT_FixedDUR2,RV_OK,TK_Complete,EK03ASY170,03A OSBL P&IDs IPL & Line List Issue Milestone,,,,0,0,0,0,0,0,0,0,,2005-12-20 00:00,2005-12-20 00:00,2007-04-02 08:00,2007-04-02 08:00,,2007-01-27 00:00,2007-01-27 00:00,,,2005-12-30 17:00,2005-12-30 17:00,,,,,PT_Normal,,,,,3nlI2wpsQ32fSuAayCCDXQ,o7gEnV7urkKIPSYzAi0xVx,,,N,0,0,,,2007-02-01 02:43,2007-02-04 01:05,hbe4678,hbe4678,,,0
3339,12459520,14517,6816161,13330,0,100,N,N,N,CP_Units,TT_FinMile,DT_FixedDUR2,RV_OK,TK_Complete,EK03BSY170,03B OSBL P&IDs IPL & Line List Issue Milestone,,,,0,0,0,0,0,0,0,0,,2005-12-20 00:00,2005-12-20 00:00,2007-05-07 08:00,2007-05-07 08:00,,2007-01-27 00:00,2007-01-27 00:00,,,2005-12-30 17:00,2005-12-30 17:00,,,,,PT_Normal,,,,,nMmAcfQhQXC8LjoOztJ51w,o7gEnV7urkKIPSYzAi0xVx,,,N,0,0,,,2007-02-01 02:43,2007-02-04 01:05,hbe4678,hbe4678,,,0
3340,12459521,14517,6816172,13330,1,100,N,N,N,CP_Units,TT_Task,DT_FixedDUR2,RV_OK,TK_Complete,EK03DIC300,03D In Line Instrument Approved Vendor Data,,,,0,0,0,0,160,0,0,0,,2006-02-01 00:00,2006-06-19 00:00,2007-07-09 08:00,2007-07-09 08:00,,2007-01-27 00:00,2007-01-27 00:00,,,2005-11-03 08:00,2005-11-30 17:00,,,,,PT_Normal,,,,,BFkh/jIDRxOKf05TPGeIAg,0Kp5VdcbokO533JKS8NMkw,,,N,0,0,,,2007-02-01 02:43,2007-02-04 01:05,hbe4678,hbe4678,,,0
3341,12459522,14517,6816172,13330,1,100,N,N,N,CP_Units,TT_Task,DT_FixedDUR2,RV_OK,TK_Complete,EK03EIC300,03E In Line Instrument Approved Vendor Data,,,,0,0,0,0,160,0,0,0,,2006-02-01 00:00,2006-06-05 00:00,2007-07-09 08:00,2007-07-09 08:00,,2007-01-27 00:00,2007-01-27 00:00,,,2005-11-03 08:00,2005-11-30 17:00,,,,,PT_Normal,,,,,jpryoMHISDK9SQy7obItuA,kudvcqlu/UKzQlHbqaOmZQ,,,N,0,0,,,2007-02-01 02:43,2007-02-04 01:05,hbe4678,hbe4678,,,0
3342,12459523,14517,6816172,13330,1,100,N,N,N,CP_Units,TT_Task,DT_FixedDUR2,RV_OK,TK_Complete,EK03FIC300,03F In Line Instrument Approved Vendor Data,,,,0,0,0,0,160,0,0,0,,2006-02-01 00:00,2006-06-20 00:00,2007-05-10 08:01,2007-05-10 08:01,,2007-01-27 00:00,2007-01-27 00:00,,,2005-11-03 08:00,2005-11-30 17:00,,,,,PT_Normal,,,,,Y5WI/PZiTaWZRoS1Z43hTQ,0Kp5VdcbokO533JKS8NMkw,,,N,0,0,,,2007-02-01 02:43,2007-02-04 01:05,hbe4678,hbe4678,,,0
3343,12459524,14517,6816172,13330,1,100,N,N,N,CP_Units,TT_Task,DT_FixedDUR2,RV_OK,TK_Complete,EK03YIC300,03Y In Line Instrument Approved Vendor Data,,,,0,0,0,0,160,0,0,0,,2006-02-01 00:00,2006-06-21 00:00,2007-03-13 08:00,2007-03-13 08:00,,2007-01-27 00:00,2007-01-27 00:00,,,2005-11-03 08:00,2005-11-30 17:00,,,,,PT_Normal,,,,,UymPYKc6QaKCLF1IlX9WTg,sRH6pfONX0qwrtBlsuKJ2g,,,N,0,0,,,2007-02-01 02:43,2007-02-04 01:05,hbe4678,hbe4678,,,0
3344,12459525,14517,6816172,13330,1,100,N,N,N,CP_Units,TT_Task,DT_FixedDUR2,RV_OK,TK_Complete,EK03CIC300,03C In Line Instrument Approved Vendor Data,,,,0,0,0,0,160,0,0,0,,2006-02-01 00:00,2006-05-15 17:00,2007-05-08 08:00,2007-05-08 08:00,,2007-01-27 00:00,2007-01-27 00:00,,,2005-11-03 08:00,2005-11-30 17:00,,,,,PT_Normal,,,,,lJjusBOZRCyHiweoLdsRWg,0Kp5VdcbokO533JKS8NMkw,,,N,0,0,,,2007-02-01 02:43,2007-02-04 01:05,hbe4678,hbe4678,,,0
3345,12459526,14517,6816172,13330,1,100,N,N,N,CP_Units,TT_Task,DT_FixedDUR2,RV_OK,TK_Complete,EK030I1100,030 Orific Plates - D/S Utility Plant,,,,0,0,0,0,120,0,0,0,,2005-10-24 08:00,2005-12-05 17:00,2007-01-09 08:01,2007-01-09 08:01,,2007-01-27 00:00,2007-01-27 00:00,,,2005-10-24 08:00,2005-11-11 17:00,,,,,PT_Normal,,,,,90L8jp3GRr+IH9aMumSDOQ,gou+f9cdVEyDwPYWnfi5yh,,,N,0,0,,,2007-02-01 02:43,2007-02-04 01:05,hbe4678,hbe4678,,,0
3346,12459527,14517,6816172,13330,1,100,N,N,N,CP_Units,TT_Task,DT_FixedDUR2,RV_OK,TK_Complete,EK030I1105,030 Orific Plates - Purchase ERW Utility Plant,,,,0,0,0,0,40,0,0,0,,2006-01-30 08:00,2006-04-11 00:00,2009-01-16 08:00,2009-01-16 08:00,,2007-01-27 00:00,2007-01-27 00:00,,,2006-01-30 08:00,2006-02-03 17:00,,,,,PT_Normal,,,,,VF7xJ3GOS+Gxl9+QPf5AJw,FsFjkqZYGUSubtl89eEsYB,,,N,0,0,,,2007-02-01 02:43,2007-02-04 01:05,hbe4678,hbe4678,,,0
3347,12459528,14517,6816172,13330,1,100,N,N,N,CP_Units,TT_Task,DT_FixedDUR2,RV_OK,TK_Complete,EK030IC210,"030 Control Valves - D/S, Sizing,Tech Eval",,,,0,0,0,0,120,0,0,0,,2005-10-24 08:00,2006-01-20 17:00,2007-03-05 08:00,2007-03-05 08:00,,2007-01-27 00:00,2007-01-27 00:00,,,2005-10-24 08:00,2005-11-11 17:00,,,,,PT_Normal,,,,,l90+QXlXQ/iPlUXtvrZdPA,qWGyQvI/t0GbEJJN/P+PPx,,,N,0,0,,,2007-02-01 02:43,2007-02-04 01:05,hbe4678,hbe4678,,,0
3348,12459529,14517,6816172,13330,1,100,N,N,N,CP_Units,TT_Task,DT_FixedDUR2,RV_OK,TK_Complete,EK030IC213,030 Control Valves - Purchase ERW,,,,0,0,0,0,40,0,0,0,,2006-01-31 08:00,2006-07-07 17:00,2009-02-15 08:01,2009-02-15 08:01,,2007-01-27 00:00,2007-01-27 00:00,,,2006-01-31 08:00,2006-02-06 17:00,,,,,PT_Normal,,,,,IkJLkRfsSXeHvfwGHvor9w,f2RkW4wMxEm4/OerUQLRmh,,,N,0,0,,,2007-02-01 02:43,2007-02-04 01:05,hbe4678,hbe4678,,,0
3349,12459530,14517,6816172,13330,1,100,N,N,N,CP_Units,TT_Task,DT_FixedDUR2,RV_OK,TK_Complete,EK03AIC300,03A In Line Instrument Approved Vendor Data,,,,0,0,0,0,160,0,0,0,,2006-02-01 00:00,2006-06-19 00:00,2007-04-02 08:00,2007-04-02 08:00,,2007-01-27 00:00,2007-01-27 00:00,,,2005-11-03 08:00,2005-11-30 17:00,,,,,PT_Normal,,,,,tar9LcTQTZ6NS4UfEB/qVA,fLE7aUew4kmUrBdhD+SG9Q,,,N,0,0,,,2007-02-01 02:43,2007-02-04 01:05,hbe4678,hbe4678,,,0
3350,12459531,14517,6816172,13330,1,100,N,N,N,CP_Units,TT_Task,DT_FixedDUR2,RV_OK,TK_Complete,EK03BIC300,03B In Line Instrument Approved Vendor Data,,,,0,0,0,0,160,0,0,0,,2006-02-01 00:00,2006-06-19 00:00,2007-07-09 08:00,2007-07-09 08:00,,2007-01-27 00:00,2007-01-27 00:00,,,2005-11-03 08:00,2005-11-30 17:00,,,,,PT_Normal,,,,,ne3vtPY1SQCGk+JUSDsVcQ,kudvcqlu/UKzQlHbqaOmZQ,,,N,0,0,,,2007-02-01 02:43,2007-02-04 01:05,hbe4678,hbe4678,,,0
3351,12459532,14517,6816172,13330,1,100,N,N,N,CP_Units,TT_Task,DT_FixedDUR2,RV_OK,TK_Complete,EK03YIC120,03Y Instrument Detail Model / Review,,,,0,0,0,0,200,0,0,0,,2006-08-15 00:00,2006-09-20 17:00,2007-07-09 08:00,2007-07-09 08:00,,2007-01-27 00:00,2007-01-27 00:00,,,2006-08-17 08:00,2006-09-20 17:00,,,,,PT_Normal,,,,,sUT3smkiRyOwwr4IOQlp8w,+hDho+NQBEGrSq8lVpmFcB,,,N,0,0,,,2007-02-01 02:43,2007-02-04 01:05,hbe4678,hbe4678,,,0
3352,12459533,14517,6816172,13330,1,100,N,N,N,CP_Units,TT_Task,DT_FixedDUR2,RV_OK,TK_Complete,EK03FIC120,03F Instrument Detail Model / Review,,,,0,0,0,0,240,0,0,0,,2006-06-19 08:00,2006-09-04 17:00,2007-07-09 08:00,2007-07-09 08:00,,2007-01-27 00:00,2007-01-27 00:00,,,2006-06-19 08:00,2006-07-28 17:00,,,,,PT_Normal,,,,,d+tys41NT0W9klM5eG3okA,YTAHl/wP3EqFVGq/LBX5ah,,,N,0,0,,,2007-02-01 02:43,2007-02-04 01:05,hbe4678,hbe4678,,,0
3353,12459534,14517,6816172,13330,1,100,N,N,N,CP_Units,TT_Task,DT_FixedDUR2,RV_OK,TK_Complete,EK03AIC120,03A Instrument Detail Model / Review,,,,0,0,0,0,160,0,0,0,,2006-07-07 00:00,2006-09-04 00:00,2007-07-09 08:00,2007-07-09 08:00,,2007-01-27 00:00,2007-01-27 00:00,,,2006-07-17 08:00,2006-08-11 17:00,,,,,PT_Normal,,,,,VjgIrp8bQO6vpM/eefFRFg,mrN3cxOo6Ua+CJlmJOc2/x,,,N,0,0,,,2007-02-01 02:43,2007-02-04 01:05,hbe4678,hbe4678,,,0
3354,12459535,14517,6816172,13330,1,100,N,N,N,CP_Units,TT_Task,DT_FixedDUR2,RV_OK,TK_Complete,EK03BIC120,03B Instrument Detail Model / Review,,,,0,0,0,0,440,0,0,0,,2006-06-19 08:00,2006-09-13 00:00,2007-07-09 08:00,2007-07-09 08:00,,2007-01-27 00:00,2007-01-27 00:00,,,2006-06-19 08:00,2006-09-01 17:00,,,,,PT_Normal,,,,,FMaL7431QQiSakmO0FJLgQ,mrN3cxOo6Ua+CJlmJOc2/x,,,N,0,0,,,2007-02-01 02:43,2007-02-04 01:05,hbe4678,hbe4678,,,0
3355,12459536,14517,6816172,13330,1,100,N,N,N,CP_Units,TT_Task,DT_FixedDUR2,RV_OK,TK_Complete,EK03CIC120,03C Instrument Detail Model / Review,,,,0,0,0,0,160,0,0,0,,2006-04-21 08:00,2006-05-18 17:00,2007-07-09 08:00,2007-07-09 08:00,,2007-01-27 00:00,2007-01-27 00:00,,,2006-04-21 08:00,2006-05-18 17:00,,,,,PT_Normal,,,,,0i/1fZ57RkO6qlxFKhgtjQ,l11aLa+HaE66GbSWWOTk6h,,,N,0,0,,,2007-02-01 02:43,2007-02-04 01:05,hbe4678,hbe4678,,,0
3356,12459537,14517,6816172,13330,1,100,N,N,N,CP_Units,TT_Task,DT_FixedDUR2,RV_OK,TK_Complete,EK03DIC120,03D Instrument Detail Model / Review,,,,0,0,0,0,200,0,0,0,,2006-06-19 08:00,2006-06-26 00:00,2007-07-09 08:00,2007-07-09 08:00,,2007-01-27 00:00,2007-01-27 00:00,,,2006-06-19 08:00,2006-07-21 17:00,,,,,PT_Normal,,,,,cz8eUigOTBanMYv8lg8l5A,gCUH9GlGV0qjo3609/4Pjh,,,N,0,0,,,2007-02-01 02:43,2007-02-04 01:05,hbe4678,hbe4678,,,0
3357,12459538,14517,6816172,13330,1,100,N,N,N,CP_Units,TT_Task,DT_FixedDUR2,RV_OK,TK_Complete,EK03EIC120,03E Instrument Detail Model / Review,,,,0,0,0,0,280,0,0,0,,2006-09-04 08:00,2006-10-23 17:00,2007-07-09 08:00,2007-07-09 08:00,,2007-01-27 00:00,2007-01-27 00:00,,,2006-09-04 08:00,2006-10-20 17:00,,,,,PT_Normal,,,,,eqiidn2MR7iDTTmd2WQhcw,QqW+SU8FF06fe4hZCvWE6h,,,N,0,0,,,2007-02-01 02:43,2007-02-04 01:05,hbe4678,hbe4678,,,0
3358,12459539,14517,6816174,13330,0,100,N,N,N,CP_Units,TT_FinMile,DT_FixedDrtn,RV_OK,TK_Complete,EK000YA809,(EP-10) Locate Utility Tie-Ins,,,,0,0,0,0,0,0,0,0,,2005-07-27 00:00,2005-07-27 00:00,2009-02-15 08:01,2009-02-15 08:01,,2007-01-27 00:00,2007-01-27 00:00,,,2005-10-21 08:01,2005-10-21 08:01,,,,,PT_Normal,,,,,A5E7Xy0ETSmvM8rP3SJAiQ,,,,N,0,0,,,2007-02-01 02:43,2007-02-04 01:05,hbe4678,hbe4678,,,0
3359,12459540,14517,6816174,13330,0,100,N,N,N,CP_Units,TT_FinMile,DT_FixedDrtn,RV_OK,TK_Complete,EK000YA810,(EP-11) Issue Level 3 CPM Schedule,,,,0,0,0,0,0,0,0,0,,2005-09-02 08:01,2005-09-02 08:01,2009-02-15 08:01,2009-02-15 08:01,,2007-01-27 00:00,2007-01-27 00:00,,,2005-09-02 08:01,2005-09-02 08:01,,,,,PT_Normal,,,,,cymkHozGRdqHqg19a6dAKg,,,,N,0,0,,,2007-02-01 02:43,2007-02-04 01:05,hbe4678,hbe4678,,,0
3360,12459541,14517,6816174,13330,0,100,N,N,N,CP_Units,TT_FinMile,DT_FixedDrtn,RV_OK,TK_Complete,EK000YA811,(EP-12) Issue Process Release,,,,0,0,0,0,0,0,0,0,,2005-06-08 00:00,2005-06-08 00:00,2009-02-15 08:01,2009-02-15 08:01,,2007-01-27 00:00,2007-01-27 00:00,,,2005-10-29 08:01,2005-10-29 08:01,,,,,PT_Normal,,,,,5IZN53wnTaSI8FYyqRVDYw,,,,N,0,0,,,2007-02-01 02:43,2007-02-04 01:05,hbe4678,hbe4678,,,0
3361,12459542,14517,6816174,13332,1,0,N,N,N,CP_Units,TT_Task,DT_FixedDrtn,RV_OK,TK_Active,EK000YA500,Issue ISBL Paint & Insulation Work Package,,6000,5904,568,0,0,0,640,0,0,0,,2006-11-30 08:00,,2009-02-15 08:00,2009-04-26 17:00,,2007-01-27 08:00,2007-04-07 17:00,2007-01-27 08:00,2007-04-07 17:00,2006-11-30 08:00,2007-02-17 17:00,,2009-02-15 08:00,2009-04-26 17:00,,PT_Normal,,,,,48/LgrUcSUqJHLTe0PRFqg,aAh3UQA+9Eik2ZUfIG8+rx,,,N,0,0,,,2007-02-01 02:43,2007-02-01 02:43,hbe4678,hbe4678,2007-01-27 08:00,2007-04-07 17:00,568
3362,12459543,14517,6816174,13332,0,100,N,N,N,CP_Units,TT_FinMile,DT_FixedDrtn,RV_OK,TK_Complete,EK000YA888,(TLA-02)  Second TLA Payment,,,,0,0,0,0,0,0,0,0,,2006-10-31 00:00,2006-10-31 00:00,2008-10-11 08:01,2008-10-11 08:01,,2007-01-27 00:00,2007-01-27 00:00,,,2006-12-02 08:01,2006-12-02 08:01,,,,,PT_Normal,,,,,PhRqycpZRdC8eznAkNJDMA,77gvy1U330aVW268Im8Fmh,,,N,0,0,,,2007-02-01 02:43,2007-02-04 01:05,hbe4678,hbe4678,,,0
3363,12459544,14517,6816174,13332,0,0,N,N,N,CP_Units,TT_FinMile,DT_FixedDrtn,RV_OK,TK_NotStart,EK000YA889,(TLA-03)  Complete > TLA Payments,,4984.01666666667,5456,0,0,0,0,0,0,0,0,,,,2009-02-15 08:01,2009-02-15 08:01,,2007-06-02 17:00,2007-06-02 17:00,2007-06-02 17:00,2007-06-02 17:00,2007-06-02 17:00,2007-06-02 17:00,,2009-02-15 08:01,2009-02-15 08:01,,PT_Normal,,,,,FCy9LRVxSM6eCBOwYOcCow,uuEYEg1eDEqC7ozrGtzyHh,,,N,0,0,,,2007-02-01 02:43,2007-02-04 01:00,hbe4678,hbe4678,2007-06-02 17:00,2007-06-02 17:00,0
3364,12459545,14517,6816174,4047,1,100,N,N,N,CP_Drtn,TT_Task,DT_FixedDUR2,RV_OK,TK_Complete,EK020ELEG5,Cathodic Protection - Design & Specs Package (By Consultant),,,,0,0,0,0,360,0,0,0,,2006-09-01 08:00,2006-11-27 17:00,2007-02-06 08:01,2007-02-06 08:01,,2007-01-27 00:00,2007-01-27 00:00,,,2006-09-01 08:00,2006-11-02 17:00,,,,,PT_Normal,,,,,HQGP7ePPQRSVfWnrhlJruw,vOQVQpuw102EmYJd8QNZSQ,,,N,0,0,,,2007-02-01 02:43,2007-02-04 01:05,hbe4678,hbe4678,,,0
3365,12459546,14517,6816174,4047,1,0,N,N,N,CP_Drtn,TT_Task,DT_FixedDUR2,RV_OK,TK_NotStart,EK020ELEG6,Cathodic Protection - Material Supply (By Consultant),,48.0166666666667,0,720,0,0,0,720,0,0,0,,,,2007-02-06 08:01,2007-06-12 08:01,,2007-01-29 08:00,2007-06-01 17:00,2007-01-29 08:00,2007-06-01 17:00,2007-01-29 08:00,2007-06-01 17:00,,2007-02-06 08:01,2007-06-12 08:01,,PT_Normal,,,,,HswngJYGQ/e1Yq34xz4arg,I5h0i1qsUEyOYvOJ/bCYEQ,,,N,0,0,,,2007-02-01 02:43,2007-02-04 01:00,hbe4678,hbe4678,2007-01-29 08:00,2007-06-01 17:00,720
3366,12459547,14517,6816174,13330,1,100,N,N,N,CP_Units,TT_Task,DT_FixedDUR2,RV_OK,TK_Complete,EK000PS030,Schedule Risk Analysis,,,,0,0,0,0,32,0,0,0,,2005-07-11 00:00,2005-07-21 00:00,2009-02-15 08:01,2009-02-15 08:01,,2007-01-27 00:00,2007-01-27 00:00,,,2005-06-27 08:00,2005-06-30 17:00,,,,,PT_Normal,,,,,/0VFrFBWSWOq2Q4sK1HlDQ,cWm4SpJnUE+n9RQFOmbYsh,,,N,0,0,,,2007-02-01 02:43,2007-02-04 01:05,hbe4678,hbe4678,,,0
3367,12459548,14517,6816174,13330,1,100,N,N,N,CP_Units,TT_Task,DT_FixedDUR2,RV_OK,TK_Complete,EK000PS040,Incorporate Comments / Issue Baseline Schedule,,,,0,0,0,0,72,0,0,0,,2005-07-05 08:00,2005-07-15 17:00,2009-02-15 08:01,2009-02-15 08:01,,2007-01-27 00:00,2007-01-27 00:00,,,2005-07-05 08:00,2005-07-15 17:00,,,,,PT_Normal,,,,,QGnjXFbsTZyrpx6rcrBAjg,iac5OWM1M02HE7g+j7lILx,,,N,0,0,,,2007-02-01 02:43,2007-02-04 01:05,hbe4678,hbe4678,,,0
3368,12459549,14517,6816174,13332,0,100,N,N,N,CP_Units,TT_FinMile,DT_FixedDrtn,RV_OK,TK_Complete,EK000YA835,(EP-36) Issue >90% Area Line Installation Details,,,,0,0,0,0,0,0,0,0,,2006-12-30 00:00,2006-12-30 00:00,2009-02-15 08:01,2009-02-15 08:01,,2007-03-23 17:00,2007-03-23 17:00,,,2007-03-01 17:00,2007-03-01 17:00,,,,,PT_Normal,,,,,a8ms0WN1Su6SETMvWKm/og,,,,N,0,0,,,2007-02-01 02:43,2007-02-04 01:05,hbe4678,hbe4678,,,0
3369,12459550,14517,6816174,13332,0,100,N,N,N,CP_Units,TT_FinMile,DT_FixedDrtn,RV_OK,TK_Complete,EK000YA838,(EP-34) Issue >90% ISBL P&ID's For Construction (IFC),,,,0,0,0,0,0,0,0,0,,2006-11-25 00:00,2006-11-25 00:00,2008-02-15 17:00,2008-02-15 17:00,,2007-02-02 17:00,2007-02-02 17:00,,,2007-01-08 17:00,2007-01-08 17:00,,,,,PT_Normal,,,,,O1CD8kxATb2BqctyFhbp1Q,,,,N,0,0,,,2007-02-01 02:43,2007-02-04 01:05,hbe4678,hbe4678,,,0
3370,12459551,14517,6816174,13332,0,100,N,N,N,CP_Units,TT_FinMile,DT_FixedDrtn,RV_OK,TK_Complete,EK000YA839,(EP-35) Issue >90% OSBL P&ID's For Construction (IFC),,,,0,0,0,0,0,0,0,0,,2006-11-24 00:00,2006-11-24 00:00,2009-02-15 08:01,2009-02-15 08:01,,2007-01-27 00:00,2007-01-27 00:00,,,2007-01-26 17:00,2007-01-26 17:00,,,,,PT_Normal,,,,,x5H3hRW9S1KrGqgavMFZBw,,,,N,0,0,,,2007-02-01 02:43,2007-02-04 01:05,hbe4678,hbe4678,,,0
3371,12459552,14517,6816174,13332,0,100,N,N,N,CP_Units,TT_FinMile,DT_FixedDrtn,RV_OK,TK_Complete,EK000YA841,(EP-29) Issue OSBL Plot Plan for Construction (IFC),,,,0,0,0,0,0,0,0,0,,2006-06-20 00:00,2006-06-20 00:00,2009-02-15 08:01,2009-02-15 08:01,,2007-01-27 00:00,2007-01-27 00:00,,,2006-11-20 08:01,2006-11-20 08:01,,,,,PT_Normal,,,,,r6mDL7O+TZyhQPmy2iCE5A,,,,N,0,0,,,2007-02-01 02:43,2007-02-04 01:05,hbe4678,hbe4678,,,0
3372,12459553,14517,6816174,13332,0,100,N,N,N,CP_Units,TT_FinMile,DT_FixedDrtn,RV_OK,TK_Complete,EK000YA847,(EP-39) Issue >90% OSBL Electrical Design Drawings,,,,0,0,0,0,0,0,0,0,,2007-01-12 00:00,2007-01-12 00:00,2009-02-15 08:01,2009-02-15 08:01,,2007-03-23 17:00,2007-03-23 17:00,,,2007-02-28 17:00,2007-02-28 17:00,,,,,PT_Normal,,,,,sKz89Lj1QZi0oRhdxlwHXQ,,,,N,0,0,,,2007-02-01 02:43,2007-02-04 01:05,hbe4678,hbe4678,,,0
3373,12459554,14517,6816174,13332,0,100,N,N,N,CP_Units,TT_FinMile,DT_FixedDrtn,RV_OK,TK_Complete,EK000YA848,(EP-37) Issue >90% ISBL Instrument Location Plans/Wire Lists for Construction (IFC),,,,0,0,0,0,0,0,0,0,,2006-12-18 00:00,2006-12-18 00:00,2009-02-15 08:01,2009-02-15 08:01,,2007-01-27 00:00,2007-01-27 00:00,,,2006-12-22 17:00,2006-12-22 17:00,,,,,PT_Normal,,,,,36AcoHa3RdeBn3P4XT+XGw,,,,N,0,0,,,2007-02-01 02:43,2007-02-04 01:05,hbe4678,hbe4678,,,0
3374,12459555,14517,6816174,13330,0,100,N,N,N,CP_Units,TT_FinMile,DT_FixedDrtn,RV_OK,TK_Complete,EK000YA813,(EP-14) Issue Plot Plans for Client Approval,,,,0,0,0,0,0,0,0,0,,2005-11-11 00:00,2005-11-11 00:00,2009-02-15 08:01,2009-02-15 08:01,,2007-01-27 00:00,2007-01-27 00:00,,,2005-11-30 17:00,2005-11-30 17:00,,,,,PT_Normal,,,,,izeXqKAlQbu0pg6LfKIStw,,,,N,0,0,,,2007-02-01 02:43,2007-02-04 01:05,hbe4678,hbe4678,,,0
3375,12459556,14517,6816174,13332,0,100,N,N,N,CP_Units,TT_FinMile,DT_FixedDrtn,RV_OK,TK_Complete,EK000YA822,(EP-22) Issue for Planning (IPL) >90% OSBL P&ID's,,,,0,0,0,0,0,0,0,0,,2006-03-11 08:01,2006-03-11 08:01,2009-02-15 08:01,2009-02-15 08:01,,2007-01-27 00:00,2007-01-27 00:00,,,2006-03-11 08:01,2006-03-11 08:01,,,,,PT_Normal,,,,,FgiOUBrKQfKgfexCiZgkEA,,,,N,0,0,,,2007-02-01 02:43,2007-02-04 01:05,hbe4678,hbe4678,,,0
3376,12459557,14517,6816174,13332,0,100,N,N,N,CP_Units,TT_FinMile,DT_FixedDrtn,RV_OK,TK_Complete,EK000YA824,(EP-23) Issue For Planning (IPL) >90% ISBL P&ID's,,,,0,0,0,0,0,0,0,0,,2006-03-11 08:01,2006-03-11 08:01,2009-02-15 08:01,2009-02-15 08:01,,2007-01-27 00:00,2007-01-27 00:00,,,2006-03-11 08:01,2006-03-11 08:01,,,,,PT_Normal,,,,,tEalIrepQ0qC5rXUyRiFwQ,,,,N,0,0,,,2007-02-01 02:43,2007-02-04 01:05,hbe4678,hbe4678,,,0
3377,12459558,14517,6816174,13332,0,100,N,N,N,CP_Units,TT_FinMile,DT_FixedDrtn,RV_OK,TK_Complete,EK000YA826,(EP-27) Begin Issuing Area Line Installation Details (IDF Files),,,,0,0,0,0,0,0,0,0,,2006-04-04 00:00,2006-04-04 00:00,2009-02-15 08:01,2009-02-15 08:01,,2007-01-27 00:00,2007-01-27 00:00,,,2006-06-05 17:00,2006-06-05 17:00,,,,,PT_Normal,,,,,4Tp2kR2cRGOPn4g/b/QQOQ,,,,N,0,0,,,2007-02-01 02:43,2007-02-04 01:05,hbe4678,hbe4678,,,0
3378,12459559,14517,6816174,13332,0,100,N,N,N,CP_Units,TT_FinMile,DT_FixedDrtn,RV_OK,TK_Complete,EK000YA831,(EP-26) Complete Hazard Review Meeting on >90% ISBL P&ID's,,,,0,0,0,0,0,0,0,0,,2006-03-27 17:00,2006-03-27 17:00,2009-02-15 08:01,2009-02-15 08:01,,2007-01-27 00:00,2007-01-27 00:00,,,2006-03-27 17:00,2006-03-27 17:00,,,,,PT_Normal,,,,,esmxFZm9Tf+z+rcm+k5avQ,,,,N,0,0,,,2007-02-01 02:43,2007-02-04 01:05,hbe4678,hbe4678,,,0
3379,12459560,14517,6816174,13332,0,100,N,N,N,CP_Units,TT_FinMile,DT_FixedDrtn,RV_OK,TK_Complete,EK000YA832,(EP-32) Issue OSBL (Units01/03) found./UG pipe work package,,,,0,0,0,0,0,0,0,0,,2006-11-28 00:00,2006-11-28 00:00,2009-02-15 08:01,2009-02-15 08:01,,2007-01-27 00:00,2007-01-27 00:00,,,2007-01-08 17:00,2007-01-08 17:00,,,,,PT_Normal,,,,,XrR4jTZzTvaI0TQKTc4ZjQ,,,,N,0,0,,,2007-02-01 02:43,2007-02-04 01:05,hbe4678,hbe4678,,,0
3380,12459561,14517,6816174,13332,0,100,N,N,N,CP_Units,TT_FinMile,DT_FixedDrtn,RV_OK,TK_Complete,EK000YA833,(EP-33) Issue > 90% ISBL Civil Foundations,,,,0,0,0,0,0,0,0,0,,2006-11-24 00:00,2006-11-24 00:00,2009-02-15 08:01,2009-02-15 08:01,,2007-01-27 00:00,2007-01-27 00:00,,,2007-01-08 17:00,2007-01-08 17:00,,,,,PT_Normal,,,,,rPp9DkUjQs+yHM1TH/tntw,,,,N,0,0,,,2007-02-01 02:43,2007-02-04 01:05,hbe4678,hbe4678,,,0
3381,12459562,14517,6816174,13330,0,100,N,N,N,CP_Units,TT_FinMile,DT_FixedDrtn,RV_OK,TK_Complete,EK000YA801,(EP-02) Issue 30 day Look Ahead Schedule,,,,0,0,0,0,0,0,0,0,,2005-06-27 08:01,2005-06-27 08:01,2009-02-15 08:01,2009-02-15 08:01,,2007-01-27 00:00,2007-01-27 00:00,,,2005-06-27 08:01,2005-06-27 08:01,,,,,PT_Normal,,,,,0dGtqBufRcKKOql3w4keGg,,,,N,0,0,,,2007-02-01 02:43,2007-02-04 01:05,hbe4678,hbe4678,,,0
3382,12459563,14517,6816174,13330,0,100,N,N,N,CP_Units,TT_FinMile,DT_FixedDrtn,RV_OK,TK_Complete,EK000YA802,(EP-03) Issue Process Plan,,,,0,0,0,0,0,0,0,0,,2005-04-22 00:00,2005-04-22 00:00,2009-02-15 08:01,2009-02-15 08:01,,2007-01-27 00:00,2007-01-27 00:00,,,2005-06-25 08:01,2005-06-25 08:01,,,,,PT_Normal,,,,,ncjkc5XdSImMs3PeJmvWxQ,,,,N,0,0,,,2007-02-01 02:43,2007-02-04 01:05,hbe4678,hbe4678,,,0
3383,12459564,14517,6816174,13330,0,100,N,N,N,CP_Units,TT_FinMile,DT_FixedDrtn,RV_OK,TK_Complete,EK000YA804,(EP-05) Issue Heat and Material Balance for Process Release,,,,0,0,0,0,0,0,0,0,,2005-03-25 00:00,2005-03-25 00:00,2009-02-15 08:01,2009-02-15 08:01,,2007-01-27 00:00,2007-01-27 00:00,,,2005-08-27 08:01,2005-08-27 08:01,,,,,PT_Normal,,,,,MWmELXlVTbSh9JtGDon2iw,,,,N,0,0,,,2007-02-01 02:43,2007-02-04 01:05,hbe4678,hbe4678,,,0
3384,12459565,14517,6816174,13330,0,100,N,N,N,CP_Units,TT_FinMile,DT_FixedDrtn,RV_OK,TK_Complete,EK000YA805,(EP-06) Issue Equipment List for review,,,,0,0,0,0,0,0,0,0,,2005-03-25 00:00,2005-03-25 00:00,2009-02-15 08:01,2009-02-15 08:01,,2007-01-27 00:00,2007-01-27 00:00,,,2005-08-27 08:01,2005-08-27 08:01,,,,,PT_Normal,,,,,9izD96xYRMeEB24+5xcrXA,,,,N,0,0,,,2007-02-01 02:43,2007-02-04 01:05,hbe4678,hbe4678,,,0
3385,12459566,14517,6816174,13330,0,100,N,N,N,CP_Units,TT_FinMile,DT_FixedDrtn,RV_OK,TK_Complete,EK000YA806,(EP-07) Issue Project Plan,,,,0,0,0,0,0,0,0,0,,2005-06-24 00:00,2005-06-24 00:00,2009-02-15 08:01,2009-02-15 08:01,,2007-01-27 00:00,2007-01-27 00:00,,,2005-06-25 08:01,2005-06-25 08:01,,,,,PT_Normal,,,,,5J4xJvEZRHWUbSMqoJeX1A,,,,N,0,0,,,2007-02-01 02:43,2007-02-04 01:05,hbe4678,hbe4678,,,0
3386,12459567,14517,6816174,13330,0,100,N,N,N,CP_Units,TT_FinMile,DT_FixedDrtn,RV_OK,TK_Complete,EK000YA807,(EP-08) Issue Utility Balances for Initial Release,,,,0,0,0,0,0,0,0,0,,2005-03-25 00:00,2005-03-25 00:00,2009-02-15 08:01,2009-02-15 08:01,,2007-01-27 00:00,2007-01-27 00:00,,,2005-06-25 08:01,2005-06-25 08:01,,,,,PT_Normal,,,,,0cLFZlsiQuOMlfnZyCi4lA,,,,N,0,0,,,2007-02-01 02:43,2007-02-04 01:05,hbe4678,hbe4678,,,0
3387,12459568,14517,6816174,13330,0,100,N,N,N,CP_Units,TT_FinMile,DT_FixedDrtn,RV_OK,TK_Complete,EK000YA808,(EP-09) Issue Engineering Plan,,,,0,0,0,0,0,0,0,0,,2005-04-01 00:00,2005-04-01 00:00,2009-02-15 08:01,2009-02-15 08:01,,2007-01-27 00:00,2007-01-27 00:00,,,2005-09-24 08:01,2005-09-24 08:01,,,,,PT_Normal,,,,,ZNaT0B51SceodYUjJW9T8Q,,,,N,0,0,,,2007-02-01 02:43,2007-02-04 01:05,hbe4678,hbe4678,,,0
3388,12459569,14517,6816174,13330,1,100,N,N,N,CP_Units,TT_Task,DT_FixedDUR2,RV_OK,TK_Complete,EK000PC010,Estimate Turnover to Project Team,,,,0,,0,,16,,,0,,2005-04-08 08:00,2005-04-14 17:00,2006-11-28 08:01,2006-11-28 08:01,,2007-01-27 00:00,2007-01-27 00:00,,,2005-04-08 08:00,2005-04-11 17:00,,,,,PT_Normal,,,,,kNNzIRPTScOOxNA0tKEkdg,,,,N,,,,,2007-02-01 02:43,2007-02-04 01:05,hbe4678,hbe4678,,,0
3389,12459570,14517,6816174,13330,1,100,N,N,N,CP_Units,TT_Task,DT_FixedDUR2,RV_OK,TK_Complete,EK000PC015,Estimate Recast & Develop Project Control Budget,,,,0,0,0,,80,,0,0,,2005-04-08 08:00,2005-05-23 17:00,2006-11-28 08:01,2006-11-28 08:01,,2007-01-27 00:00,2007-01-27 00:00,,,2005-04-08 08:00,2005-04-21 17:00,,,,,PT_Normal,,,,,R/KXLN9rRoWkG2uz+17v0Q,,,,N,0,0,,,2007-02-01 02:43,2007-02-04 01:05,hbe4678,hbe4678,,,0
3390,12459571,14517,6816174,13330,1,100,N,N,N,CP_Units,TT_Task,DT_FixedDUR2,RV_OK,TK_Complete,EK000PE015,MSD (From Metallurgy) - ISBL,,,,0,,0,,48,,,0,,2005-03-17 08:00,2005-03-29 17:00,2007-02-27 08:00,2007-02-27 08:00,,2007-01-27 00:00,2007-01-27 00:00,,,2005-03-17 08:00,2005-03-24 17:00,,,,,PT_Normal,,,,,ofDbvEnQQxGamWtW5UeLrg,,,,N,,,,,2007-02-01 02:43,2007-02-04 01:05,hbe4678,hbe4678,,,0
3391,12459572,14517,6816174,13330,1,100,N,N,N,CP_Units,TT_Task,DT_FixedDUR2,RV_OK,TK_Complete,EK000PE020,WMS Setup & Development,,,,0,,0,,24,,,0,,2005-04-06 08:00,2005-04-14 17:00,2006-11-28 08:01,2006-11-28 08:01,,2007-01-27 00:00,2007-01-27 00:00,,,2005-04-06 08:00,2005-04-08 17:00,,,,,PT_Normal,,,,,zqpeTJAHSU+K3/I66Jr+Eg,,,,N,,,,,2007-02-01 02:43,2007-02-04 01:05,hbe4678,hbe4678,,,0
3392,12459573,14517,6816174,13330,1,100,N,N,N,CP_Units,TT_Task,DT_FixedDUR2,RV_OK,TK_Complete,EK000PE025,Document Management Plan - Issue for Review,,,,0,,0,,160,,,0,,2005-02-21 08:00,2005-03-18 17:00,2009-02-15 08:01,2009-02-15 08:01,,2007-01-27 00:00,2007-01-27 00:00,,,2005-02-21 08:00,2005-03-18 17:00,,,,,PT_Normal,,,,,gat3peLDRBiti3VbVXA1uQ,,,,N,,,,,2007-02-01 02:43,2007-02-04 01:05,hbe4678,hbe4678,,,0
3393,12459574,14517,6816174,13330,1,100,N,N,N,CP_Units,TT_Task,DT_FixedDUR2,RV_OK,TK_Complete,EK000PE035,Rvw Lesson Learn w/Prj. Team&Develop Action List,,,,0,,0,,120,,,0,,2005-03-21 08:00,2005-04-15 17:00,2009-02-15 08:01,2009-02-15 08:01,,2007-01-27 00:00,2007-01-27 00:00,,,2005-03-21 08:00,2005-04-08 17:00,,,,,PT_Normal,,,,,8WJ9aGz8SNilkSZLcCtb9g,,,,N,,,,,2007-02-01 02:43,2007-02-04 01:05,hbe4678,hbe4678,,,0
3394,12459575,14517,6816174,13330,1,100,N,N,N,CP_Units,TT_Task,DT_FixedDUR2,RV_OK,TK_Complete,EK000CK080,Expedite legal issues associated w/ KBRII,,,,0,0,0,,152,,0,0,,2005-03-25 08:00,2006-03-31 00:00,2006-12-25 08:00,2006-12-25 08:00,,2007-01-27 00:00,2007-01-27 00:00,,,2005-03-25 08:00,2005-04-20 17:00,,,,,PT_Normal,,,,,5X3yRkxfSa+3r78UawUFJQ,,,,N,0,0,,,2007-02-01 02:43,2007-02-04 01:05,hbe4678,hbe4678,,,0
3395,12459576,14517,6816174,13330,1,100,N,N,N,CP_Units,TT_Task,DT_FixedDUR2,RV_OK,TK_Complete,EK000CK085,Establish bank account in Egypt,,,,0,0,0,,640,,0,0,,2004-08-02 00:00,2006-02-24 00:00,2007-05-29 17:00,2007-05-29 17:00,,2007-01-27 00:00,2007-01-27 00:00,,,2005-02-28 08:00,2005-06-20 17:00,,,,,PT_Normal,,,,,b0mpjFO5Qz2UcwCPsPa8Sg,,,,N,0,0,,,2007-02-01 02:43,2007-02-04 01:05,hbe4678,hbe4678,,,0
3396,12459577,14517,6816174,13330,1,100,N,N,N,CP_Units,TT_Task,DT_FixedDUR2,RV_OK,TK_Complete,EK000GE005,Estimate Escalation Check - Info to Estimating,,,,0,,0,,160,,,0,,2005-02-21 08:00,2005-03-16 17:00,2006-11-28 08:01,2006-11-28 08:01,,2007-01-27 00:00,2007-01-27 00:00,,,2005-02-21 08:00,2005-03-18 17:00,,,,,PT_Normal,,,,,IHrb77l4Q0+s3gQbYy9Tcg,,,,N,,,,,2007-02-01 02:43,2007-02-04 01:05,hbe4678,hbe4678,,,0
3397,12459578,14517,6816174,13330,1,100,N,N,N,CP_Units,TT_Task,DT_FixedDUR2,RV_OK,TK_Complete,EK000GE010,Eng. Studies - Air Coolers vs. Cooling Water,,,,0,,0,,80,,,0,,2005-03-28 08:00,2005-04-11 17:00,2007-03-07 08:01,2007-03-07 08:01,,2007-01-27 00:00,2007-01-27 00:00,,,2005-03-28 08:00,2005-04-08 17:00,,,,,PT_Normal,,,,,0Ky1d7g3Twqzdb7Mb1/tcg,,,,N,,,,,2007-02-01 02:43,2007-02-04 01:05,hbe4678,hbe4678,,,0
3398,12459579,14517,6816174,13330,1,100,N,N,N,CP_Units,TT_Task,DT_FixedDUR2,RV_OK,TK_Complete,EK000IM005,Equipment List (MEL) Definition,,,,0,0,0,,360,,0,0,,2005-02-28 08:00,2005-04-29 17:00,2009-02-15 08:01,2009-02-15 08:01,,2007-01-27 00:00,2007-01-27 00:00,,,2005-02-28 08:00,2005-04-29 17:00,,,,,PT_Normal,,,,,UK+LLphbTmWvRaBS9LiHPA,,,,N,0,0,,,2007-02-01 02:43,2007-02-04 01:05,hbe4678,hbe4678,,,0
3399,12459580,14517,6816174,13330,1,100,N,N,N,CP_Units,TT_Task,DT_FixedDUR2,RV_OK,TK_Complete,EK000IM010,Object Engineering set-up & procedures,,,,0,0,0,,240,,0,0,,2005-02-21 08:00,2005-05-13 17:00,2009-02-15 08:01,2009-02-15 08:01,,2007-01-27 00:00,2007-01-27 00:00,,,2005-02-21 08:00,2005-04-01 17:00,,,,,PT_Normal,,,,,xD/YNCEQTtu29aypIIso7Q,,,,N,0,0,,,2007-02-01 02:43,2007-02-04 01:05,hbe4678,hbe4678,,,0
3400,12459581,14517,6816174,13330,1,100,N,N,N,CP_Units,TT_Task,DT_FixedDUR2,RV_OK,TK_Complete,EK000IM020,IM Strategy plan,,,,0,,0,,168,,,0,,2005-02-21 08:00,2005-04-11 17:00,2009-02-15 08:01,2009-02-15 08:01,,2007-01-27 00:00,2007-01-27 00:00,,,2005-02-21 08:00,2005-03-21 17:00,,,,,PT_Normal,,,,,XRnK+M1yRRSSKJMJFJ6gww,,,,N,,,,,2007-02-01 02:43,2007-02-04 01:05,hbe4678,hbe4678,,,0
3401,12459582,14517,6816174,13330,1,100,N,N,N,CP_Units,TT_Task,DT_FixedDUR2,RV_OK,TK_Complete,EK000IM025,IM Execution plan,,,,0,,0,,168,,,0,,2005-02-21 08:00,2005-04-11 17:00,2009-02-15 08:01,2009-02-15 08:01,,2007-01-27 00:00,2007-01-27 00:00,,,2005-02-21 08:00,2005-03-21 17:00,,,,,PT_Normal,,,,,amIA+9iGToyVYLepz1rvlg,,,,N,,,,,2007-02-01 02:43,2007-02-04 01:05,hbe4678,hbe4678,,,0
3402,12459583,14517,6816174,13330,1,100,N,N,N,CP_Units,TT_Task,DT_FixedDUR2,RV_OK,TK_Complete,EK000IM030,Project Portal & Dashboard,,,,0,,0,,320,,,0,,2005-02-21 08:00,2005-04-05 17:00,2009-02-15 08:01,2009-02-15 08:01,,2007-01-27 00:00,2007-01-27 00:00,,,2005-02-21 08:00,2005-04-15 17:00,,,,,PT_Normal,,,,,syTUiSqnTyatsdpbj88OHg,,,,N,,,,,2007-02-01 02:43,2007-02-04 01:05,hbe4678,hbe4678,,,0
3403,12459584,14517,6816174,13330,1,100,N,N,N,CP_Units,TT_Task,DT_FixedDUR2,RV_OK,TK_Complete,EK000IM035,Establish Documentum,,,,0,,0,,80,,,0,,2005-03-07 08:00,2005-03-18 17:00,2009-02-15 08:01,2009-02-15 08:01,,2007-01-27 00:00,2007-01-27 00:00,,,2005-03-07 08:00,2005-03-18 17:00,,,,,PT_Normal,,,,,zIO/APVQR/yO6qxU4CYvSA,,,,N,,,,,2007-02-01 02:43,2007-02-04 01:05,hbe4678,hbe4678,,,0
3404,12459585,14517,6816174,13330,1,100,N,N,N,CP_Units,TT_Task,DT_FixedDUR2,RV_OK,TK_Complete,EK000IM040,Establish Citrix for Test of PDS (HOC-MEC),,,,0,,0,,160,,,0,,2005-02-28 08:00,2005-03-25 17:00,2007-01-09 08:01,2007-01-09 08:01,,2007-01-27 00:00,2007-01-27 00:00,,,2005-02-28 08:00,2005-03-25 17:00,,,,,PT_Normal,,,,,bZ2YbONvQiCptXszPQ84zA,,,,N,,,,,2007-02-01 02:43,2007-02-04 01:05,hbe4678,hbe4678,,,0
3405,12459586,14517,6816174,13330,1,100,N,N,N,CP_Units,TT_Task,DT_FixedDUR2,RV_OK,TK_Complete,EK000IM045,Establish IPMS,,,,0,,0,,80,,,0,,2005-03-21 08:00,2005-03-31 17:00,2006-11-28 08:01,2006-11-28 08:01,,2007-01-27 00:00,2007-01-27 00:00,,,2005-03-21 08:00,2005-04-01 17:00,,,,,PT_Normal,,,,,8DpwzGwQRjijpuTUChD+jA,,,,N,,,,,2007-02-01 02:43,2007-02-04 01:05,hbe4678,hbe4678,,,0
3406,12459587,14517,6816174,13330,0,100,N,N,N,CP_Units,TT_FinMile,DT_FixedDrtn,RV_OK,TK_Complete,EK000EB015,Notice to Proceed (Eng. & Procurement Only),,,,0,0,0,0,0,0,0,0,,2005-09-09 08:01,2005-09-09 08:01,2006-11-28 08:01,2006-11-28 08:01,,2007-01-27 00:00,2007-01-27 00:00,,,2005-09-09 08:01,2005-09-09 08:01,,,,,PT_Normal,,,,,g3g0nLD6Saefng0QPfS+sw,,,,N,0,0,,,2007-02-01 02:43,2007-02-04 01:05,hbe4678,hbe4678,,,0
3407,12459588,14517,6816174,13330,0,100,N,N,N,CP_Units,TT_FinMile,DT_FixedDrtn,RV_OK,TK_Complete,EK000FA005,Issue First Invoice to EBIC,,,,0,0,0,0,0,0,0,0,,2005-12-19 08:01,2005-12-19 08:01,2009-02-15 08:01,2009-02-15 08:01,,2007-01-27 00:00,2007-01-27 00:00,,,2005-12-19 08:01,2005-12-19 08:01,,,,,PT_Normal,,,,,MsSri3xvQPiMUPTjNALqAg,,,,N,0,0,,,2007-02-01 02:43,2007-02-04 01:05,hbe4678,hbe4678,,,0
3408,12459589,14517,6816174,13330,1,100,N,N,N,CP_Units,TT_Task,DT_FixedDUR2,RV_OK,TK_Complete,EK000GE025,First Check Estimate,,,,0,0,0,0,240,0,0,0,,2006-01-30 00:00,2006-03-30 00:00,2007-06-03 17:00,2007-06-03 17:00,,2007-01-27 00:00,2007-01-27 00:00,,,2006-02-27 08:00,2006-04-07 17:00,,,,,PT_Normal,,,,,ZxbY0oQ7Q1Gt0fhgnZM1PA,okFcVx93KkK9NGMtvo1kWx,,,N,0,0,,,2007-02-01 02:43,2007-02-04 01:05,hbe4678,hbe4678,,,0
3409,12459590,14517,6816174,13330,1,100,N,N,N,CP_Units,TT_Task,DT_FixedDUR2,RV_OK,TK_Complete,EK000GE030,Production Check Estimate,,,,0,0,0,0,240,0,0,0,,2006-10-17 08:00,2006-12-30 00:00,2009-02-15 08:01,2009-02-15 08:01,,2007-01-27 00:00,2007-01-27 00:00,,,2006-10-17 08:00,2006-11-27 17:00,,,,,PT_Normal,,,,,YxewDHbQRhenvPQd4x7cRw,MVCcFTg4P0qeMthWgb2kwB,,,N,0,0,,,2007-02-01 02:43,2007-02-04 01:05,hbe4678,hbe4678,,,0
3410,12459591,14517,6816174,13330,1,100,N,N,N,CP_Units,TT_Task,DT_FixedDUR2,RV_OK,TK_Complete,EK000PC020,Load PCMS & Issue First Cost Report,,,,0,0,0,0,88,0,0,0,,2005-06-03 08:00,2005-06-17 17:00,2009-02-15 08:01,2009-02-15 08:01,,2007-01-27 00:00,2007-01-27 00:00,,,2005-06-03 08:00,2005-06-17 17:00,,,,,PT_Normal,,,,,6ojYroCjQsKvkRaGutsDmw,R4CVgA6dLkm33rxDIGE/Dh,,,N,0,0,,,2007-02-01 02:43,2007-02-04 01:05,hbe4678,hbe4678,,,0
3411,12459592,14517,6816174,13330,0,0,N,N,N,CP_Units,TT_FinMile,DT_FixedDUR2,RV_OK,TK_NotStart,EK000YA030,Last PDS Planning Release,,4120,4456,0,0,0,0,0,0,0,0,,,,2009-02-13 17:00,2009-02-13 17:00,,2007-02-23 17:00,2007-02-23 17:00,2007-02-23 17:00,2007-02-23 17:00,2007-02-23 17:00,2007-02-23 17:00,,2009-02-13 17:00,2009-02-13 17:00,,PT_Normal,,,,,A6T89r/TQj+fHlXkzqMm8w,,,,N,0,0,,,2007-02-01 02:43,2007-02-01 02:43,hbe4678,hbe4678,2007-02-23 17:00,2007-02-23 17:00,0
3412,12459593,14517,6816174,13330,0,100,N,N,N,CP_Units,TT_FinMile,DT_FixedDUR2,RV_OK,TK_Complete,EK000YA040,Engineering 95% Complete,,,,0,0,0,0,0,0,0,0,,2006-12-29 00:00,2006-12-29 00:00,2009-02-15 08:01,2009-02-15 08:01,,2007-03-01 17:00,2007-03-01 17:00,,,2007-03-01 17:00,2007-03-01 17:00,,,,,PT_Normal,,,,,A+XjL/MJQJuVpwgVAUx4Dw,,,,N,0,0,,,2007-02-01 02:43,2007-02-04 01:05,hbe4678,hbe4678,,,0
3413,12459594,14517,6816174,13330,0,100,N,N,N,CP_Units,TT_Mile,DT_FixedDUR2,RV_OK,TK_Complete,EK000YA002,Start Project,,,,0,0,0,0,0,0,0,0,,2005-02-21 08:00,2005-02-21 08:00,2006-11-21 08:01,2006-11-21 08:01,,2007-01-27 00:00,2007-01-27 00:00,,,2005-02-21 08:00,2005-02-21 08:00,,,,,PT_Normal,,,,,0KXUgp85Rq+tyZlVKy1doA,,,,Y,0,0,,,2007-02-01 02:43,2007-02-04 01:05,hbe4678,hbe4678,,,0
3414,12459595,14517,6816174,13330,0,100,N,N,N,CP_Units,TT_FinMile,DT_FixedDUR2,RV_OK,TK_Complete,EK000YA005,Process Release,,,,0,0,0,0,0,0,0,0,,2005-06-08 00:00,2005-06-08 00:00,2009-02-15 08:01,2009-02-15 08:01,,2007-01-27 00:00,2007-01-27 00:00,,,2005-06-03 17:00,2005-06-03 17:00,,,,,PT_Normal,,,,,uY8O/budRmiLUReQtG2XyA,,,,N,0,0,,,2007-02-01 02:43,2007-02-04 01:05,hbe4678,hbe4678,,,0
3415,12459596,14517,6816174,13330,1,100,N,N,N,CP_Units,TT_Task,DT_FixedDUR2,RV_OK,TK_Complete,EK000PR145,Eng. Studies - Ammonia Product Line U/G vs. A/G,,,,0,0,0,,160,,0,0,,2005-03-21 08:00,2005-04-29 00:00,2007-06-19 08:01,2007-06-19 08:01,,2007-01-27 00:00,2007-01-27 00:00,,,2005-03-21 08:00,2005-04-15 17:00,,,,,PT_Normal,,,,,YNDDi5+RQUWFdqWXlleKIw,,,,N,0,0,,,2007-02-01 02:43,2007-02-04 01:05,hbe4678,hbe4678,,,0
3416,12459597,14517,6816174,13330,1,100,N,N,N,CP_Units,TT_Task,DT_FixedDUR2,RV_OK,TK_Complete,EK000PS010,Level III CPM Schedule / First Planner,,,,0,0,0,0,272,0,0,0,,2005-05-09 08:00,2005-06-24 00:00,2009-02-15 08:01,2009-02-15 08:01,,2007-01-27 00:00,2007-01-27 00:00,,,2005-05-09 08:00,2005-06-24 17:00,,,,,PT_Normal,,,,,QKm8oWq0SaKJFaXOoxs1Kg,,,,N,0,0,,,2007-02-01 02:43,2007-02-04 01:05,hbe4678,hbe4678,,,0
3417,12459598,14517,6816174,13330,1,100,N,N,N,CP_Units,TT_Task,DT_FixedDUR2,RV_OK,TK_Complete,EK000PS015,Issue 90 Day look ahead schedule,,,,0,,0,,104,,,0,,2005-03-07 08:00,2005-03-23 17:00,2006-11-28 08:01,2006-11-28 08:01,,2007-01-27 00:00,2007-01-27 00:00,,,2005-03-07 08:00,2005-03-23 17:00,,,,,PT_Normal,,,,,VzOFtJbwTLm4zlPEbe3EMw,,,,N,,,,,2007-02-01 02:43,2007-02-04 01:05,hbe4678,hbe4678,,,0
3418,12459599,14517,6816174,13330,1,100,N,N,N,CP_Units,TT_Task,DT_FixedDUR2,RV_OK,TK_Complete,EK000QM005,Training - Object Engineering,,,,0,0,0,0,40,0,0,0,,2005-09-05 08:00,2005-09-12 08:00,2009-02-15 08:01,2009-02-15 08:01,,2007-01-27 00:00,2007-01-27 00:00,,,2005-09-05 08:00,2005-09-09 17:00,,,,,PT_Normal,,,,,6csWJ+V5QIeXTpnMvuNG3g,,,,N,0,0,,,2007-02-01 02:43,2007-02-04 01:05,hbe4678,hbe4678,,,0
3419,12459600,14517,6816174,13330,1,100,N,N,N,CP_Units,TT_Task,DT_FixedDUR2,RV_OK,TK_Complete,EK000QM010,Training - Export Compliance,,,,0,,0,,0,,,0,,2005-03-10 08:00,2005-03-10 17:00,2006-11-28 08:01,2006-11-28 08:01,,2007-01-27 00:00,2007-01-27 00:00,,,2005-03-10 08:00,2005-03-10 08:00,,,,,PT_Normal,,,,,WHiU5+NFSsirqM8vWNmu4w,,,,N,,,,,2007-02-01 02:43,2007-02-04 01:05,hbe4678,hbe4678,,,0
3420,12459601,14517,6816174,13330,1,100,N,N,N,CP_Units,TT_Task,DT_FixedDUR2,RV_OK,TK_Complete,EK000QM015,Develop & Issue Quality Plan,,,,0,,0,,88,,,0,,2005-03-18 08:00,2005-04-15 17:00,2009-02-15 08:01,2009-02-15 08:01,,2007-01-27 00:00,2007-01-27 00:00,,,2005-03-18 08:00,2005-04-01 17:00,,,,,PT_Normal,,,,,s7ycT36HREqMVGgqnA8c3A,,,,N,,,,,2007-02-01 02:43,2007-02-04 01:05,hbe4678,hbe4678,,,0
3421,12459602,14517,6816174,13330,1,100,N,N,N,CP_Units,TT_Task,DT_FixedDUR2,RV_OK,TK_Complete,EK000QM020,Develop/ Issue/ Approval of QA/QC Manual (EBIC/EXIM Verification),,,,0,0,0,0,120,0,0,0,,2005-05-02 00:00,2005-11-30 17:00,2009-02-15 08:01,2009-02-15 08:01,,2007-01-27 00:00,2007-01-27 00:00,,,2005-06-07 08:00,2005-06-27 17:00,,,,,PT_Normal,,,,,t7LB74oFTmafUHHF899UMg,,,,N,0,0,,,2007-02-01 02:43,2007-02-04 01:05,hbe4678,hbe4678,,,0
3422,12459603,14517,6816174,13330,1,100,N,N,N,CP_Units,TT_Task,DT_FixedDUR2,RV_OK,TK_Complete,EK000QM025,Training - Management System,,,,0,0,0,0,8,0,0,0,,2005-07-05 08:00,2005-07-05 17:00,2009-02-15 08:01,2009-02-15 08:01,,2007-01-27 00:00,2007-01-27 00:00,,,2005-07-05 08:00,2005-07-05 17:00,,,,,PT_Normal,,,,,e1fiR78yQC6tPfpZiur5ng,,,,N,0,0,,,2007-02-01 02:43,2007-02-04 01:05,hbe4678,hbe4678,,,0
3423,12459604,14517,6816174,13330,1,100,N,N,N,CP_Units,TT_Task,DT_FixedDUR2,RV_OK,TK_Complete,EK000PK010,Issue critical req'n submittal sched to Procmnt,,,,0,,0,,80,,,0,,2005-03-28 08:00,2005-04-08 17:00,2006-11-28 08:01,2006-11-28 08:01,,2007-01-27 00:00,2007-01-27 00:00,,,2005-03-28 08:00,2005-04-08 17:00,,,,,PT_Normal,,,,,wdCcIB1mS6GbQSuwW4/PqQ,,,,N,,,,,2007-02-01 02:43,2007-02-04 01:05,hbe4678,hbe4678,,,0
3424,12459605,14517,6816174,13330,1,100,N,N,N,CP_Units,TT_Task,DT_FixedDUR2,RV_OK,TK_Complete,EK000PK030,Provide Job Specific SDR2 Priorities to Purch.,,,,0,,0,,80,,,0,,2005-03-21 08:00,2005-04-01 17:00,2009-02-15 08:01,2009-02-15 08:01,,2007-01-27 00:00,2007-01-27 00:00,,,2005-03-21 08:00,2005-04-01 17:00,,,,,PT_Normal,,,,,RHeXfJxaT5OK3dwq+5xRMw,,,,N,,,,,2007-02-01 02:43,2007-02-04 01:05,hbe4678,hbe4678,,,0
3425,12459606,14517,6816174,13330,1,100,N,N,N,CP_Units,TT_Task,DT_FixedDUR2,RV_OK,TK_Complete,EK000PM015,Project Coordination Procedure - IFA,,,,0,,0,,168,,,0,,2005-02-21 08:00,2005-03-25 17:00,2006-11-28 08:01,2006-11-28 08:01,,2007-01-27 00:00,2007-01-27 00:00,,,2005-02-21 08:00,2005-03-21 17:00,,,,,PT_Normal,,,,,EWb2qkLHRZ+9sFdtCQPUsA,,,,N,,,,,2007-02-01 02:43,2007-02-04 01:05,hbe4678,hbe4678,,,0
3426,12459607,14517,6816174,13330,1,100,N,N,N,CP_Units,TT_Task,DT_FixedDUR2,RV_OK,TK_Complete,EK000PM030,Estimate Escalation Check - IRC Approvals,,,,0,,0,,32,,,0,,2005-03-28 08:00,2005-03-31 17:00,2006-11-28 08:01,2006-11-28 08:01,,2007-01-27 00:00,2007-01-27 00:00,,,2005-03-28 08:00,2005-03-31 17:00,,,,,PT_Normal,,,,,reThl3QTQ7afjK5Smd0eMQ,,,,N,,,,,2007-02-01 02:43,2007-02-04 01:05,hbe4678,hbe4678,,,0
3427,12459608,14517,6816174,13330,1,100,N,N,N,CP_Units,TT_Task,DT_FixedDUR2,RV_OK,TK_Complete,EK000PM045,Issue Execution Strategy /Project Execution Plan,,,,0,0,0,,120,,0,0,,2005-03-28 08:00,2005-06-24 00:00,2009-02-15 08:01,2009-02-15 08:01,,2007-01-27 00:00,2007-01-27 00:00,,,2005-03-28 08:00,2005-04-15 17:00,,,,,PT_Normal,,,,,HnAAeU/PRE22GJDl3z6Gvw,,,,N,0,0,,,2007-02-01 02:43,2007-02-04 01:05,hbe4678,hbe4678,,,0
3428,12459609,14517,6816174,13330,1,100,N,N,N,CP_Units,TT_Task,DT_FixedDUR2,RV_OK,TK_Complete,EK000PM055,Complete EPC Insurance Forms,,,,0,0,0,,312,,0,0,,2005-03-21 08:00,2005-06-03 17:00,2006-11-28 08:01,2006-11-28 08:01,,2007-01-27 00:00,2007-01-27 00:00,,,2005-03-21 08:00,2005-05-12 17:00,,,,,PT_Normal,,,,,M1GxaLyrR5uWqJm1uFbv8A,,,,N,0,0,,,2007-02-01 02:43,2007-02-04 01:05,hbe4678,hbe4678,,,0
3429,12459610,14517,6816174,13330,1,100,N,N,N,CP_Units,TT_Task,DT_FixedDUR2,RV_OK,TK_Complete,EK000PE065,Develop & Issue HOC - MEC Coordination Plan,,,,0,0,0,,160,,0,0,,2005-03-28 08:00,2005-04-22 17:00,2009-02-15 08:01,2009-02-15 08:01,,2007-01-27 00:00,2007-01-27 00:00,,,2005-03-28 08:00,2005-04-22 17:00,,,,,PT_Normal,,,,,PV5co3JPRbuFHfA6bGtttQ,,,,N,0,0,,,2007-02-01 02:43,2007-02-04 01:05,hbe4678,hbe4678,,,0
3430,12459611,14517,6816174,13330,1,100,N,N,N,CP_Units,TT_Task,DT_FixedDUR2,RV_OK,TK_Complete,EK000PE095,Disciplines Load WMS with Budgets & Deliverables,,,,0,0,0,,40,,0,0,,2005-04-15 08:00,2005-05-20 17:00,2009-02-15 08:01,2009-02-15 08:01,,2007-01-27 00:00,2007-01-27 00:00,,,2005-04-15 08:00,2005-04-21 17:00,,,,,PT_Normal,,,,,7mHFv9HfRUWPb8vGjJN29g,,,,N,0,0,,,2007-02-01 02:43,2007-02-04 01:05,hbe4678,hbe4678,,,0
3431,12459612,14517,6816174,13330,1,100,N,N,N,CP_Units,TT_Task,DT_FixedDUR2,RV_OK,TK_Complete,EK000PC005,Prepare Estimate for Escalation Check,,,,0,,0,,56,,,0,,2005-03-17 08:00,2005-03-25 17:00,2006-11-28 08:01,2006-11-28 08:01,,2007-01-27 00:00,2007-01-27 00:00,,,2005-03-17 08:00,2005-03-25 17:00,,,,,PT_Normal,,,,,2SAjll/YSmaeKj4XvoDIJA,,,,N,,,,,2007-02-01 02:43,2007-02-04 01:05,hbe4678,hbe4678,,,0
3432,12459613,14517,6816176,13330,1,100,N,N,N,CP_Units,TT_Task,DT_FixedDUR2,RV_OK,TK_Complete,EK000CV136,Issue Rough Grade (Ammonia) S/C PKG,,,,0,0,0,0,40,0,0,0,,2005-05-31 08:00,2005-06-27 00:00,2006-12-25 08:00,2006-12-25 08:00,,2007-01-27 00:00,2007-01-27 00:00,,,2005-05-31 08:00,2005-06-06 17:00,,,,,PT_Normal,,,,,+1o5SUhfRaeQRnFifpybiA,+OdeCidYLEuDFxkfA1ANxh,,,N,0,0,,,2007-02-01 02:43,2007-02-04 01:05,hbe4678,hbe4678,,,0
3433,12459614,14517,6816176,13330,1,100,N,N,N,CP_Units,TT_Task,DT_FixedDUR2,RV_OK,TK_Complete,EK000CV140,Issue Site Survey S/C PKG,,,,0,0,0,0,40,0,0,0,,2005-05-27 00:00,2005-06-14 00:00,2007-01-09 08:01,2007-01-09 08:01,,2007-01-27 00:00,2007-01-27 00:00,,,2005-05-31 08:00,2005-06-06 17:00,,,,,PT_Normal,,,,,V9QE+ohIQoeRBjC9c7FCwA,LZhpfhYywkaKGwLHVHWRRB,,,N,0,0,,,2007-02-01 02:43,2007-02-04 01:05,hbe4678,hbe4678,,,0
3434,12459615,14517,6816176,13330,1,100,N,N,N,CP_Units,TT_Task,DT_FixedDUR2,RV_OK,TK_Complete,EK000CV145,Issue Site Leveling PKG,,,,0,0,0,0,40,0,0,0,,2005-05-27 00:00,2005-06-16 00:00,2007-01-10 08:00,2007-01-10 08:00,,2007-01-27 00:00,2007-01-27 00:00,,,2005-05-31 08:00,2005-06-06 17:00,,,,,PT_Normal,,,,,WJ8Og1qWRWi0A6Nj/X/tJQ,4qrDEW4hV0aI1X08vq9e/h,,,N,0,0,,,2007-02-01 02:43,2007-02-04 01:05,hbe4678,hbe4678,,,0
3435,12459616,14517,6816176,13330,1,100,N,N,N,CP_Units,TT_Task,DT_FixedDUR2,RV_OK,TK_Complete,EK000CV137,Issue OSBL Rough Grade Design Pkg.,,,,0,0,0,0,184,0,0,0,,2005-10-11 08:00,2005-12-27 00:00,2007-09-02 08:01,2007-09-02 08:01,,2007-01-27 00:00,2007-01-27 00:00,,,2005-10-11 08:00,2005-11-10 17:00,,,,,PT_Normal,,,,,hSq56hjrQk2zUBUxser8CQ,LZhpfhYywkaKGwLHVHWRRB,,,N,0,0,,,2007-02-01 02:43,2007-02-04 01:05,hbe4678,hbe4678,,,0
3436,12459617,14517,6816176,13330,1,100,N,N,N,CP_Units,TT_Task,DT_FixedDUR2,RV_OK,TK_Complete,EK000CV165,Issue ISBL Rough Grade Design Pkg.,,,,0,0,0,0,240,0,0,0,,2005-09-08 08:00,2005-11-04 00:00,2006-12-25 08:00,2006-12-25 08:00,,2007-01-27 00:00,2007-01-27 00:00,,,2005-09-08 08:00,2005-10-19 17:00,,,,,PT_Normal,,,,,uC8ncnJ8RzuOO+Ligfl+2Q,nr1JFGGhaEqIMUFZ8SwKwR,,,N,0,0,,,2007-02-01 02:43,2007-02-04 01:05,hbe4678,hbe4678,,,0
3437,12459618,14517,6816176,13330,1,100,N,N,N,CP_Units,TT_Task,DT_FixedDUR2,RV_OK,TK_Complete,EK000CVK35,OSBL Rough Grading/Road,,,,0,0,0,0,160,0,0,0,,2005-04-27 00:00,2005-06-23 00:00,2006-12-25 08:00,2006-12-25 08:00,,2007-01-27 00:00,2007-01-27 00:00,,,2005-06-27 08:00,2005-07-26 17:00,,,,,PT_Normal,,,,,ofj/nZtaRHSGNIEwGOTgLw,AGzLTh5VuE2j2j9nBDMpNR,,,N,0,0,,,2007-02-01 02:43,2007-02-04 01:05,hbe4678,hbe4678,,,0
3438,12459619,14517,6816176,13330,1,100,N,N,N,CP_Units,TT_Task,DT_FixedDUR2,RV_OK,TK_Complete,EK000CV045,Prepare Foundation Design Criteria,,,,0,0,0,0,80,0,0,0,,2006-02-16 00:00,2006-04-14 00:00,2006-12-25 08:00,2006-12-25 08:00,,2007-01-27 00:00,2007-01-27 00:00,,,2006-02-27 08:01,2006-03-13 08:01,,,,,PT_Normal,,,,,wX//KZmFSvqfxJ04Ex6iUA,,,,N,0,0,,,2007-02-01 02:43,2007-02-04 01:05,hbe4678,hbe4678,,,0
3439,12459620,14517,6816176,13330,1,100,N,N,N,CP_Units,TT_Task,DT_FixedDUR2,RV_OK,TK_Complete,EK000CV050,Prepare EBIC Class 'C' & 'S' Spec - FMCL Basis,,,,0,,0,,160,,,0,,2005-03-14 08:00,2005-04-15 17:00,2006-12-25 08:00,2006-12-25 08:00,,2007-01-27 00:00,2007-01-27 00:00,,,2005-03-14 08:00,2005-04-08 17:00,,,,,PT_Normal,,,,,YaffMWFDTHu5fvk8aBazQA,,,,N,,,,,2007-02-01 02:43,2007-02-04 01:05,hbe4678,hbe4678,,,0
3440,12459621,14517,6816176,13330,1,100,N,N,N,CP_Units,TT_Task,DT_FixedDUR2,RV_OK,TK_Complete,EK000CV060,Civil project highlights,,,,0,,0,,80,,,0,,2005-03-28 08:00,2005-04-15 17:00,2006-12-25 08:00,2006-12-25 08:00,,2007-01-27 00:00,2007-01-27 00:00,,,2005-03-28 08:00,2005-04-08 17:00,,,,,PT_Normal,,,,,mEsvaQBcTNSoDQ7ISh7CoA,,,,N,,,,,2007-02-01 02:43,2007-02-04 01:05,hbe4678,hbe4678,,,0
3441,12459622,14517,6816176,13330,1,100,N,N,N,CP_Units,TT_Task,DT_FixedDUR2,RV_OK,TK_Complete,EK000CV065,Review Perimeter Wall Design - IFC (by OCI),,,,0,0,0,0,160,0,0,0,,2005-06-20 00:00,2005-07-15 00:00,2007-02-27 08:00,2007-02-27 08:00,,2007-01-27 00:00,2007-01-27 00:00,,,2005-08-02 08:00,2005-08-29 17:00,,,,,PT_Normal,,,,,MqCuOxNjTFmhyn+pjYL9Ig,,,,N,0,0,,,2007-02-01 02:43,2007-02-04 01:05,hbe4678,hbe4678,,,0
3442,12459623,14517,6816176,13330,1,100,N,N,N,CP_Units,TT_Task,DT_FixedDUR2,RV_OK,TK_Complete,EK000CV070,Validate Concrete & Steel by Planning Areas,,,,0,0,0,,120,,0,0,,2005-03-21 08:00,2005-05-16 00:00,2006-11-28 08:01,2006-11-28 08:01,,2007-01-27 00:00,2007-01-27 00:00,,,2005-03-21 08:00,2005-04-08 17:00,,,,,PT_Normal,,,,,nXbpsW7CSPWOiIj0SIzzjw,,,,N,0,0,,,2007-02-01 02:43,2007-02-04 01:05,hbe4678,hbe4678,,,0
3443,12459624,14517,6816176,13330,1,100,N,N,N,CP_Units,TT_Task,DT_FixedDUR2,RV_OK,TK_Complete,EK000CV075,Egyptian Professional Engineer - Define Reqmnts,,,,0,,0,,80,,,0,,2005-04-04 08:00,2005-04-07 17:00,2006-12-25 08:00,2006-12-25 08:00,,2007-01-27 00:00,2007-01-27 00:00,,,2005-04-04 08:00,2005-04-15 17:00,,,,,PT_Normal,,,,,8PyHwniOQIq5gE28AEKrCw,,,,N,,,,,2007-02-01 02:43,2007-02-04 01:05,hbe4678,hbe4678,,,0
3444,12459625,14517,6816176,13330,1,100,N,N,N,CP_Units,TT_Task,DT_FixedDUR2,RV_OK,TK_Complete,EK000CV080,Egyptian Professional Eng. - Issue P.O/Subc. Pkg,,,,0,,0,,40,,,0,,2005-04-07 08:00,2005-04-08 17:00,2006-12-25 08:00,2006-12-25 08:00,,2007-01-27 00:00,2007-01-27 00:00,,,2005-04-07 08:00,2005-04-13 17:00,,,,,PT_Normal,,,,,u+qUe9u/TKGlT4y6XNUxZg,,,,N,,,,,2007-02-01 02:43,2007-02-04 01:05,hbe4678,hbe4678,,,0
3445,12459626,14517,6816176,13330,1,100,N,N,N,CP_Units,TT_Task,DT_FixedDUR2,RV_OK,TK_Complete,EK000CV030,Prepare EBIC Wind & EarthquakeSpecs,,,,0,,0,,112,,,0,,2005-03-09 08:00,2005-03-28 17:00,2006-12-25 08:00,2006-12-25 08:00,,2007-01-27 00:00,2007-01-27 00:00,,,2005-03-09 08:00,2005-03-28 17:00,,,,,PT_Normal,,,,,yX8U7S02TSCiANgK4/3iUA,,,,N,,,,,2007-02-01 02:43,2007-02-04 01:05,hbe4678,hbe4678,,,0
3446,12459627,14517,6816176,13330,1,100,N,N,N,CP_Units,TT_Task,DT_FixedDUR2,RV_OK,TK_Complete,EK000CV005,Identify scope / Project set-up,,,,0,,0,,200,,,0,,2005-02-22 08:00,2005-03-25 17:00,2006-11-28 08:01,2006-11-28 08:01,,2007-01-27 00:00,2007-01-27 00:00,,,2005-02-22 08:00,2005-03-28 17:00,,,,,PT_Normal,,,,,mYeuvEWQSs29mBpw75CXQQ,,,,N,,,,,2007-02-01 02:43,2007-02-04 01:05,hbe4678,hbe4678,,,0
3447,12459628,14517,6816176,13330,1,100,N,N,N,CP_Units,TT_Task,DT_FixedDUR2,RV_OK,TK_Complete,EK000CV010,HOC / MEC split of Work,,,,0,,0,,120,,,0,,2005-03-09 08:00,2005-03-18 17:00,2006-12-25 08:00,2006-12-25 08:00,,2007-01-27 00:00,2007-01-27 00:00,,,2005-03-09 08:00,2005-03-29 17:00,,,,,PT_Normal,,,,,jr5SibP1Q7u1RZBDPhBHWg,,,,N,,,,,2007-02-01 02:43,2007-02-04 01:05,hbe4678,hbe4678,,,0
3448,12459629,14517,6816176,13330,1,100,N,N,N,CP_Units,TT_Task,DT_FixedDUR2,RV_OK,TK_Complete,EK000CV015,Civil work Plan & Safety check list,,,,0,,0,,120,,,0,,2005-03-14 08:00,2005-04-15 17:00,2009-02-15 08:01,2009-02-15 08:01,,2007-01-27 00:00,2007-01-27 00:00,,,2005-03-14 08:00,2005-04-01 17:00,,,,,PT_Normal,,,,,Bn3rcu8zTa2ZiV2mSSkwFQ,,,,N,,,,,2007-02-01 02:43,2007-02-04 01:05,hbe4678,hbe4678,,,0
3449,12459630,14517,6816176,13330,1,100,N,N,N,CP_Units,TT_Task,DT_FixedDUR2,RV_OK,TK_Complete,EK000CV035,Prepare Geotech S/C Pkgs,,,,0,0,0,,120,,0,0,,2005-03-28 08:00,2005-05-27 17:00,2006-12-25 08:00,2006-12-25 08:00,,2007-01-27 00:00,2007-01-27 00:00,,,2005-03-28 08:00,2005-04-15 17:00,,,,,PT_Normal,,,,,HzFjagSUTNmXTSjcs9qVkw,,,,N,0,0,,,2007-02-01 02:43,2007-02-04 01:05,hbe4678,hbe4678,,,0
3450,12459631,14517,6816176,13330,1,100,N,N,N,CP_Units,TT_Task,DT_FixedDUR2,RV_OK,TK_Complete,EK000CV040,Prepare Topo Survey S/C Pkg,,,,0,,0,,80,,,0,,2005-03-14 08:00,2005-03-25 17:00,2006-12-25 08:00,2006-12-25 08:00,,2007-01-27 00:00,2007-01-27 00:00,,,2005-03-14 08:00,2005-03-25 17:00,,,,,PT_Normal,,,,,607OfNj6S6aDMn0yomOZ9w,,,,N,,,,,2007-02-01 02:43,2007-02-04 01:05,hbe4678,hbe4678,,,0
3451,12459632,14517,6816176,13330,1,100,N,N,N,CP_Units,TT_Task,DT_FixedDUR2,RV_OK,TK_Complete,EK000CV020,Review FMCL documents - Specs & Drawings,,,,0,,0,,120,,,0,,2005-02-28 08:00,2005-03-18 17:00,2006-12-25 08:00,2006-12-25 08:00,,2007-01-27 00:00,2007-01-27 00:00,,,2005-02-28 08:00,2005-03-18 17:00,,,,,PT_Normal,,,,,0zSIrBJmSmiz2i/Atp9TwQ,,,,N,,,,,2007-02-01 02:43,2007-02-04 01:05,hbe4678,hbe4678,,,0
3452,12459633,14517,6816176,13330,1,100,N,N,N,CP_Units,TT_Task,DT_FixedDUR2,RV_OK,TK_Complete,EK000CV025,Review SEGAS Wind & Earthquake Specs,,,,0,,0,,88,,,0,,2005-03-07 08:00,2005-03-21 17:00,2006-12-25 08:00,2006-12-25 08:00,,2007-01-27 00:00,2007-01-27 00:00,,,2005-03-07 08:00,2005-03-21 17:00,,,,,PT_Normal,,,,,2DjRDepQQW+7Mf9TjXTdVA,,,,N,,,,,2007-02-01 02:43,2007-02-04 01:05,hbe4678,hbe4678,,,0
3453,12459634,14517,6816176,13330,1,100,N,N,N,CP_Units,TT_Task,DT_FixedDUR2,RV_OK,TK_Complete,EK000CV036,Issue Geotech S/C PKG,,,,0,0,0,0,40,0,0,0,,2005-05-27 00:00,2005-06-02 00:00,2006-12-25 08:00,2006-12-25 08:00,,2007-01-27 00:00,2007-01-27 00:00,,,2005-05-31 08:00,2005-06-06 17:00,,,,,PT_Normal,,,,,99ImSjPBS0iJMA+opbfUig,6oW05/GlukyBkleZhtyYox,,,N,0,0,,,2007-02-01 02:43,2007-02-04 01:05,hbe4678,hbe4678,,,0
3454,12459635,14517,6816177,4047,1,0,N,N,N,CP_Drtn,TT_Task,DT_FixedDUR2,RV_OK,TK_Active,EK000ELEN2,"01,03,04 LV//MV WIRING DIAGRAMS & CTL SCHEMATICS - IFC",,4072,0,208,0,0,0,240,0,0,0,,2006-11-13 08:00,,2009-01-09 08:00,2009-02-13 17:00,2007-03-05 17:00,2007-01-29 08:00,2007-03-05 17:00,2007-01-29 08:00,2007-03-05 17:00,2006-11-13 08:00,2006-12-22 17:00,,2009-01-09 08:00,2009-02-13 17:00,,PT_Normal,,,,,eRoj41w7RIWaTRnSkDM6ZQ,,,,N,0,0,,,2007-02-01 02:43,2007-02-01 02:43,hbe4678,hbe4678,2007-01-29 08:00,2007-03-05 17:00,208
3455,12459636,14517,6816177,4047,1,0,N,N,N,CP_Drtn,TT_Task,DT_FixedDUR2,RV_OK,TK_Active,EK000ELEN3,"01,03, Equipment Interconnection Diagrams - IFC",,4088,0,192,0,0,0,960,0,0,0,,2006-10-27 08:00,,2009-01-13 08:00,2009-02-13 17:00,,2007-01-29 08:00,2007-03-01 17:00,2007-01-29 08:00,2007-03-01 17:00,2006-10-27 08:00,2007-04-12 17:00,,2009-01-13 08:00,2009-02-13 17:00,,PT_Normal,,,,,44Jp7qmWSXK5S0KxJmNuZw,,,,N,0,0,,,2007-02-01 02:43,2007-02-03 00:30,hbe4678,hbe4678,2007-01-29 08:00,2007-03-01 17:00,192
3456,12459637,14517,6816177,13330,1,100,N,N,N,CP_Units,TT_Task,DT_FixedDUR2,RV_OK,TK_Complete,EK010E008D,540-SB Admin. Area Pwr Supply - Tech Evaluation,,,,0,0,0,0,80,0,0,0,,2006-05-04 00:00,2006-06-30 17:00,2007-05-07 08:01,2007-05-07 08:01,,2007-01-27 00:00,2007-01-27 00:00,,,2006-05-01 08:00,2006-05-12 17:00,,,,,PT_Normal,,,,,FY+tDwlwRZqd9YE1mJJwOA,pJjyEnSaO0+TbSTqqBTlBQ,,,N,0,0,,,2007-02-01 02:43,2007-02-04 01:05,hbe4678,hbe4678,,,0
3457,12459638,14517,6816177,13330,1,100,N,N,N,CP_Units,TT_Task,DT_FixedDUR2,RV_OK,TK_Complete,PK010E008J,540-SG Admin. Area Pwr Supply - Planning V. Data,,,,0,0,0,0,160,0,0,0,2006-11-15 00:00,2006-12-04 08:01,2006-12-11 17:00,2007-06-20 08:01,2007-06-20 08:01,,2007-01-27 00:00,2007-01-27 00:00,,,2006-12-04 08:01,2007-01-01 08:01,,,,CS_MSOA,PT_Normal,,,,,2K7sADOyT5e4oVX5OEeRLQ,YBUb+gzLNEG+TW3NDgbuww,,,N,0,0,,,2007-02-01 02:43,2007-02-04 01:05,hbe4678,hbe4678,,,0
3458,12459639,14517,6816177,13330,1,100,N,N,N,CP_Drtn,TT_Task,DT_FixedDUR2,RV_OK,TK_Complete,EK010E008A,540-SB Admin. Area Pwr Supply -  ERW Package,,,,0,0,0,0,200,0,0,0,,2006-03-03 08:00,2006-03-17 00:00,2007-05-07 08:01,2007-05-07 08:01,,2007-01-27 00:00,2007-01-27 00:00,,,2006-03-03 08:00,2006-04-06 17:00,,,,,PT_Normal,,,,,ZA0A8BvJTJGCpLPum+FDug,NgKbeFVBREyQe1UlPXkZFw,,,N,0,0,,,2007-02-01 02:43,2007-02-04 01:05,hbe4678,hbe4678,,,0
3459,12459640,14517,6816177,13330,1,100,N,N,N,CP_Drtn,TT_Task,DT_FixedDUR2,RV_OK,TK_Complete,EK000ELEG0,Electrical Heat Tracing -  ERW Package,,,,0,0,0,0,200,0,0,0,,2006-07-18 00:00,2006-08-31 00:00,2007-06-05 08:00,2007-06-05 08:00,,2007-01-27 00:00,2007-01-27 00:00,,,2006-07-24 08:00,2006-08-25 17:00,,,,,PT_Normal,,,,,uDL48nvtQFO311pJUmSzKQ,vOQVQpuw102EmYJd8QNZSQ,,,N,0,0,,,2007-02-01 02:43,2007-02-04 01:05,hbe4678,hbe4678,,,0
3460,12459641,14517,6816177,13330,1,0,N,N,N,CP_Drtn,TT_Task,DT_FixedDUR2,RV_OK,TK_Active,EK000ELEGP,Electrical Heat Tracing -  Design & BOM by Consultant,,728,0,192,0,0,0,200,0,0,0,2006-10-30 00:00,2006-10-26 00:00,,2007-06-05 08:00,2007-07-06 17:00,2007-03-01 17:00,2007-01-29 08:00,2007-03-01 17:00,2007-01-29 08:00,2007-03-01 17:00,2006-10-30 08:00,2006-12-01 17:00,,2007-06-05 08:00,2007-07-06 17:00,CS_MSOA,PT_Normal,,,,,7oRVMmFmTeqCCK04p4yKKA,NgKbeFVBREyQe1UlPXkZFw,,,N,0,0,,,2007-02-01 02:43,2007-02-01 02:43,hbe4678,hbe4678,2007-01-29 08:00,2007-03-01 17:00,192
3461,12459642,14517,6816177,13330,1,100,N,N,N,CP_Units,TT_Task,DT_FixedDUR2,RV_OK,TK_Complete,EK000E004A,UPS System - Issue ERW,,,,0,0,0,0,80,0,0,0,,2006-03-20 00:00,2006-04-27 17:00,2007-03-07 08:01,2007-03-07 08:01,,2007-01-27 00:00,2007-01-27 00:00,,,2006-03-27 08:00,2006-04-07 17:00,,,,,PT_Normal,,,,,G8gzONVfTM2Glp3/KvlJmQ,Qh9mlgGYo0CZYtBp7LvBFg,,,N,0,0,,,2007-02-01 02:43,2007-02-04 01:05,hbe4678,hbe4678,,,0
3462,12459643,14517,6816177,13330,1,100,N,N,N,CP_Units,TT_Task,DT_FixedDUR2,RV_OK,TK_Complete,EK000E004D,UPS System - Tech Evaluation,,,,0,0,0,0,80,0,0,0,,2006-06-21 08:00,2006-07-28 00:00,2007-03-07 08:01,2007-03-07 08:01,,2007-01-27 00:00,2007-01-27 00:00,,,2006-06-21 08:00,2006-07-04 17:00,,,,,PT_Normal,,,,,QozxJyRQQ1GZa6pVLtfnAg,N/sb80/e60G4B7QcYWXTfA,,,N,0,0,,,2007-02-01 02:43,2007-02-04 01:05,hbe4678,hbe4678,,,0
3463,12459644,14517,6816177,13330,1,100,N,N,N,CP_Units,TT_Task,DT_FixedDUR2,RV_OK,TK_Complete,PK000E004J,UPS System - Planning V. Data,,,,0,0,0,0,160,0,0,0,,2006-08-18 00:00,2006-11-10 17:00,2007-03-27 08:01,2007-03-27 08:01,,2007-01-27 00:00,2007-01-27 00:00,,,2006-08-10 08:00,2006-09-06 17:00,,,,,PT_Normal,,,,,D7mSByavRuS/A1U/LfEBCw,H6y6JozVv0qjoTFO9oWIuA,,,N,0,0,,,2007-02-01 02:43,2007-02-04 01:05,hbe4678,hbe4678,,,0
3464,12459645,14517,6816177,13330,1,100,N,N,N,CP_Units,TT_Task,DT_FixedDUR2,RV_OK,TK_Complete,PK000E001J,Sub Stations - Planning V. Data,,,,0,0,0,0,160,0,0,0,,2006-07-04 00:00,2006-09-27 00:00,2007-03-27 08:01,2007-03-27 08:01,,2007-01-27 00:00,2007-01-27 00:00,,,2006-09-18 08:00,2006-10-13 17:00,,,,,PT_Normal,,,,,c8jDASJvQ8+RNhD46xeZ2Q,,,,N,0,0,,,2007-02-01 02:43,2007-02-04 01:05,hbe4678,hbe4678,,,0
3465,12459646,14517,6816177,13330,1,100,N,N,N,CP_Units,TT_Task,DT_FixedDUR2,RV_OK,TK_Complete,PK000E002J,Transformer - Planning V. Data,,,,0,0,0,0,160,0,0,0,,2006-08-03 00:00,2006-09-27 00:00,2007-03-27 08:01,2007-03-27 08:01,,2007-01-27 00:00,2007-01-27 00:00,,,2006-08-07 08:00,2006-09-01 17:00,,,,,PT_Normal,,,,,/PZeSYvpQ2G7oT35fkzbNA,,,,N,0,0,,,2007-02-01 02:43,2007-02-04 01:05,hbe4678,hbe4678,,,0
3466,12459647,14517,6816177,13330,1,100,N,N,N,CP_Units,TT_Task,DT_FixedDUR2,RV_OK,TK_Complete,EK000EL005,Electrical Work Plans,,,,0,,0,,120,,,0,,2005-03-14 08:00,2005-04-08 17:00,2007-03-07 08:01,2007-03-07 08:01,,2007-01-27 00:00,2007-01-27 00:00,,,2005-03-14 08:00,2005-04-01 17:00,,,,,PT_Normal,,,,,qZNr2ZsNQwqrfjGe8XMk4w,,,,N,,,,,2007-02-01 02:43,2007-02-04 01:05,hbe4678,hbe4678,,,0
3467,12459648,14517,6816177,13330,1,100,N,N,N,CP_Units,TT_Task,DT_FixedDUR2,RV_OK,TK_Complete,EK000EL015,Split of work with MEC and Other Discipline,,,,0,,0,,40,,,0,,2005-03-28 08:00,2005-03-30 17:00,2007-03-07 08:01,2007-03-07 08:01,,2007-01-27 00:00,2007-01-27 00:00,,,2005-03-28 08:00,2005-04-01 17:00,,,,,PT_Normal,,,,,E4tN1Bm5T3GGvZcyv3GiAg,,,,N,,,,,2007-02-01 02:43,2007-02-04 01:05,hbe4678,hbe4678,,,0
3468,12459649,14517,6816177,13330,1,100,N,N,N,CP_Units,TT_Task,DT_FixedDUR2,RV_OK,TK_Complete,EK000EL020,Define bulk material requirements,,,,0,,0,,40,,,0,,2005-03-21 08:00,2005-03-25 17:00,2009-02-15 08:01,2009-02-15 08:01,,2007-01-27 00:00,2007-01-27 00:00,,,2005-03-21 08:00,2005-03-25 17:00,,,,,PT_Normal,,,,,mfy6oEYTSK6rR63SrHwhNQ,,,,N,,,,,2007-02-01 02:43,2007-02-04 01:05,hbe4678,hbe4678,,,0
3469,12459650,14517,6816177,13330,1,100,N,N,N,CP_Units,TT_Task,DT_FixedDUR2,RV_OK,TK_Complete,EK000EL025,Develop installation details,,,,0,0,0,,320,,0,0,,2005-03-28 08:00,2005-06-06 17:00,2009-02-15 08:01,2009-02-15 08:01,,2007-01-27 00:00,2007-01-27 00:00,,,2005-03-28 08:00,2005-05-20 17:00,,,,,PT_Normal,,,,,+xgEd+yyRWCKOsfu+izGIw,,,,N,0,0,,,2007-02-01 02:43,2007-02-04 01:05,hbe4678,hbe4678,,,0
3470,12459651,14517,6816177,13330,1,100,N,N,N,CP_Units,TT_Task,DT_FixedDUR2,RV_OK,TK_Complete,EK000EL035,Voltage drop table,,,,0,,0,,40,,,0,,2005-04-04 08:00,2005-04-08 17:00,2009-02-15 08:01,2009-02-15 08:01,,2007-01-27 00:00,2007-01-27 00:00,,,2005-04-04 08:00,2005-04-08 17:00,,,,,PT_Normal,,,,,xocWIfVsSt+ZjiCMJMttWw,,,,N,,,,,2007-02-01 02:43,2007-02-04 01:05,hbe4678,hbe4678,,,0
3471,12459652,14517,6816177,13330,1,100,N,N,N,CP_Units,TT_Task,DT_FixedDUR2,RV_OK,TK_Complete,EK000E001A,Sub Stations - Issue ERW,,,,0,0,0,0,120,0,0,0,,2005-12-22 08:01,2006-01-31 00:00,2007-03-07 08:01,2007-03-07 08:01,,2007-01-27 00:00,2007-01-27 00:00,,,2005-12-22 08:01,2006-01-16 08:01,,,,,PT_Normal,,,,,aRWJuFYQQSqipUwQozYfiA,,,,N,0,0,,,2007-02-01 02:43,2007-02-04 01:05,hbe4678,hbe4678,,,0
3472,12459653,14517,6816177,13330,1,100,N,N,N,CP_Units,TT_Task,DT_FixedDUR2,RV_OK,TK_Complete,EK000E001D,Sub Stations - Tech Evaluation,,,,0,0,0,0,80,0,0,0,,2006-03-22 00:00,2006-05-26 17:00,2007-03-27 08:01,2007-03-27 08:01,,2007-01-27 00:00,2007-01-27 00:00,,,2006-03-16 08:00,2006-03-29 17:00,,,,,PT_Normal,,,,,H8jVQv4pTrOc8yk+XKnfTQ,,,,N,0,0,,,2007-02-01 02:43,2007-02-04 01:05,hbe4678,hbe4678,,,0
3473,12459654,14517,6816177,13330,1,100,N,N,N,CP_Units,TT_Task,DT_FixedDUR2,RV_OK,TK_Complete,EK000E002A,Transformer - Issue ERW,,,,0,0,0,0,80,0,0,0,,2006-01-17 08:00,2006-01-30 00:00,2007-03-08 08:01,2007-03-08 08:01,,2007-01-27 00:00,2007-01-27 00:00,,,2006-01-17 08:00,2006-01-30 17:00,,,,,PT_Normal,,,,,F6mgtADKSM+Ynt7Z+QHHSg,,,,N,0,0,,,2007-02-01 02:43,2007-02-04 01:05,hbe4678,hbe4678,,,0
3474,12459655,14517,6816177,13330,1,100,N,N,N,CP_Units,TT_Task,DT_FixedDUR2,RV_OK,TK_Complete,EK000E002D,Transformer - Tech Evaluation,,,,0,0,0,0,80,0,0,0,,2006-04-04 00:00,2006-06-13 17:00,2007-03-08 08:01,2007-03-08 08:01,,2007-01-27 00:00,2007-01-27 00:00,,,2006-04-10 08:00,2006-04-21 17:00,,,,,PT_Normal,,,,,bmr/aIbATSGTnMpckRm6GA,,,,N,0,0,,,2007-02-01 02:43,2007-02-04 01:05,hbe4678,hbe4678,,,0
3475,12459656,14517,6816177,13330,1,0,N,N,N,CP_Units,TT_Task,DT_FixedDUR2,RV_OK,TK_NotStart,PK000E001Z,Sub Stations - FAT,,496.016666666667,0,80,0,0,0,40,0,0,0,,,,2007-06-13 08:01,2007-06-27 08:01,,2007-03-19 08:00,2007-03-30 17:00,2007-03-19 08:00,2007-03-30 17:00,2007-03-19 08:00,2007-03-23 17:00,,2007-06-13 08:01,2007-06-27 08:01,,PT_Normal,,,,,8U96Gw/OTdKZ1GPbaYkTEQ,dHlYYx96Y062ClZjgp36jB,,,N,0,0,,,2007-02-01 02:43,2007-02-04 01:00,hbe4678,hbe4678,2007-03-19 08:00,2007-03-30 17:00,80
3476,12459657,14517,6816177,4047,1,100,N,N,N,CP_Drtn,TT_Task,DT_FixedDUR2,RV_OK,TK_Complete,EK000ELZE0,Area Classification,,,,0,0,0,0,2400,0,0,0,,2005-03-14 00:00,2006-01-30 00:00,2007-05-07 08:00,2007-05-07 08:00,,2007-01-27 00:00,2007-01-27 00:00,,,2006-01-30 08:00,2007-03-23 17:00,,,,,PT_Normal,,,,,00X2CowMTGKbzGiBEjsf8Q,,,,N,0,0,,,2007-02-01 02:43,2007-02-04 01:05,hbe4678,hbe4678,,,0
3477,12459658,14517,6816177,4047,1,100,N,N,N,CP_Drtn,TT_Task,DT_FixedDUR2,RV_OK,TK_Complete,EK020ELEG2,Cathodic Protection - Subcontract Consultant ERW Package,,,,0,0,0,0,360,0,0,0,,2005-11-09 00:00,2006-03-31 17:00,2007-02-06 08:01,2007-02-06 08:01,,2007-01-27 00:00,2007-01-27 00:00,,,2006-01-30 08:00,2006-03-31 17:00,,,,,PT_Normal,,,,,00fqqZskSzW4VvOYmEhuYw,,,,N,0,0,,,2007-02-01 02:43,2007-02-04 01:05,hbe4678,hbe4678,,,0
3478,12459659,14517,6816177,4047,1,100,N,N,N,CP_Drtn,TT_Task,DT_FixedDUR2,RV_OK,TK_Complete,EK000ELEJ1,"Lighting, Installation Details",,,,0,0,0,0,8,0,0,0,,2006-01-28 00:00,2006-01-30 17:00,2007-11-20 08:01,2007-11-20 08:01,,2007-01-27 00:00,2007-01-27 00:00,,,2006-01-30 08:00,2006-01-30 17:00,,,,,PT_Normal,,,,,sMPOU2pPSjq9hLah1MwKkw,,,,N,0,0,,,2007-02-01 02:43,2007-02-04 01:05,hbe4678,hbe4678,,,0
3479,12459660,14517,6816177,4047,1,100,N,N,N,CP_Drtn,TT_Task,DT_FixedDUR2,RV_OK,TK_Complete,EK000ELEK1,"A/G Power & Control, Details",,,,0,0,0,0,8,0,0,0,,2006-01-28 00:00,2006-01-30 17:00,2007-05-07 08:00,2007-05-07 08:00,,2007-01-27 00:00,2007-01-27 00:00,,,2006-01-30 08:00,2006-01-30 17:00,,,,,PT_Normal,,,,,HD5w0WezReeaVovLq/mYhw,,,,N,0,0,,,2007-02-01 02:43,2007-02-04 01:05,hbe4678,hbe4678,,,0
3480,12459661,14517,6816177,4047,1,0,N,N,N,CP_Drtn,TT_Task,DT_FixedDUR2,RV_OK,TK_Active,EK000ELEN1,"01,03,04 LV Wiring Diagrams - IFC",,4072,0,208,0,0,0,240,0,0,0,,2006-11-13 08:00,,2009-01-09 08:00,2009-02-13 17:00,2007-03-05 17:00,2007-01-29 08:00,2007-03-05 17:00,2007-01-29 08:00,2007-03-05 17:00,2006-11-13 08:00,2006-12-22 17:00,,2009-01-09 08:00,2009-02-13 17:00,,PT_Normal,,,,,9tEPXJI1QbqjzzNzwjvCqQ,,,,N,0,0,,,2007-02-01 02:43,2007-02-01 02:43,hbe4678,hbe4678,2007-01-29 08:00,2007-03-05 17:00,208
3481,12459662,14517,6816178,13330,1,100,N,N,N,CP_Units,TT_Task,DT_FixedDUR2,RV_OK,TK_Complete,EK000EV015,Issue load sheets for wastewater systems,,,,0,0,0,0,160,0,0,0,,2005-05-20 08:00,2005-06-30 17:00,2007-07-03 08:01,2007-07-03 08:01,,2007-01-27 00:00,2007-01-27 00:00,,,2005-05-20 08:00,2005-06-17 17:00,,,,,PT_Normal,,,,,ru/BUAF6Qv2dbSekdFWaUQ,,,,N,0,0,,,2007-02-01 02:43,2007-02-04 01:05,hbe4678,hbe4678,,,0
3482,12459663,14517,6816178,13330,1,100,N,N,N,CP_Units,TT_Task,DT_FixedDUR2,RV_OK,TK_Complete,EK000EV020,Develop Preliminary noise model,,,,0,0,0,,120,,0,0,,2005-04-11 08:00,2005-05-20 17:00,2007-02-27 08:00,2007-02-27 08:00,,2007-01-27 00:00,2007-01-27 00:00,,,2005-04-11 08:00,2005-04-29 17:00,,,,,PT_Normal,,,,,uQPlV1PwS9WYho4RtccuOw,,,,N,0,0,,,2007-02-01 02:43,2007-02-04 01:05,hbe4678,hbe4678,,,0
3483,12459664,14517,6816178,13330,1,100,N,N,N,CP_Units,TT_Task,DT_FixedDUR2,RV_OK,TK_Complete,EK000EV025,Develop & Issue Enviromental Work Plan,,,,0,,0,,80,,,0,,2005-03-28 08:00,2005-04-08 17:00,2009-02-15 08:01,2009-02-15 08:01,,2007-01-27 00:00,2007-01-27 00:00,,,2005-03-28 08:00,2005-04-08 17:00,,,,,PT_Normal,,,,,w8PgAsxXSZG/Ie7xcYTuLg,,,,N,,,,,2007-02-01 02:43,2007-02-04 01:05,hbe4678,hbe4678,,,0
3484,12459665,14517,6816178,13330,1,100,N,N,N,CP_Units,TT_Task,DT_FixedDUR2,RV_OK,TK_Complete,EK000EV005,Conceptual Design of Wastewater Systems,,,,0,,0,,200,,,0,,2005-03-21 08:00,2005-04-22 17:00,2007-07-03 08:01,2007-07-03 08:01,,2007-01-27 00:00,2007-01-27 00:00,,,2005-03-21 08:00,2005-04-22 17:00,,,,,PT_Normal,,,,,9HbaJfR5SAKegsyMHMvxOg,,,,N,,,,,2007-02-01 02:43,2007-02-04 01:05,hbe4678,hbe4678,,,0
3485,12459666,14517,6816178,13330,1,100,N,N,N,CP_Units,TT_Task,DT_FixedDUR2,RV_OK,TK_Complete,EK000EV010,Develop design basis for evaporation pond,,,,0,0,0,,120,,0,0,,2005-04-21 08:00,2005-06-10 17:00,2007-05-04 17:00,2007-05-04 17:00,,2007-01-27 00:00,2007-01-27 00:00,,,2005-04-21 08:00,2005-05-11 17:00,,,,,PT_Normal,,,,,pRP+BzxxSBe+OUEcfwxuVg,,,,N,0,0,,,2007-02-01 02:43,2007-02-04 01:05,hbe4678,hbe4678,,,0
3486,12459667,14517,6816181,13330,1,100,N,N,N,CP_Units,TT_Task,DT_FixedDUR2,RV_OK,TK_Complete,EK000CS027,Turnover System Definition for OSBL,,,,0,0,0,0,200,0,0,0,,2006-03-27 08:00,2006-05-29 17:00,2007-03-05 08:00,2007-03-05 08:00,,2007-01-27 00:00,2007-01-27 00:00,,,2006-03-27 08:00,2006-04-28 17:00,,,,,PT_Normal,,,,,FRt5wzrXSIqVFmtdnE/yLw,,,,N,0,0,,,2007-02-01 02:43,2007-02-04 01:05,hbe4678,hbe4678,,,0
3487,12459668,14517,6816181,13330,1,100,N,N,N,CP_Units,TT_Task,DT_FixedDUR2,RV_OK,TK_Complete,EK000CS030,Start-up Schedule (Prelim for 1st Planner),,,,0,,0,,80,,,0,,2005-04-04 08:00,2005-04-13 17:00,2009-02-15 08:01,2009-02-15 08:01,,2007-01-27 00:00,2007-01-27 00:00,,,2005-04-04 08:00,2005-04-15 17:00,,,,,PT_Normal,,,,,SssqIlM1TvmsATIxLJT44A,,,,N,,,,,2007-02-01 02:43,2007-02-04 01:05,hbe4678,hbe4678,,,0
3488,12459669,14517,6816181,13330,1,100,N,N,N,CP_Units,TT_Task,DT_FixedDUR2,RV_OK,TK_Complete,EK000CS025,Turnover System Definition for ISBL,,,,0,0,0,0,200,0,0,0,,2005-05-16 00:00,2006-03-02 17:00,2007-11-26 08:00,2007-11-26 08:00,,2007-01-27 00:00,2007-01-27 00:00,,,2005-06-21 08:00,2005-07-27 17:00,,,,,PT_Normal,,,,,izzRk3GJSw+jJidRDlxQ1g,,,,N,0,0,,,2007-02-01 02:43,2007-02-04 01:05,hbe4678,hbe4678,,,0
3489,12459670,14517,6816182,13330,1,100,N,N,N,CP_Units,TT_Task,DT_FixedDUR2,RV_OK,TK_Complete,EK000I221F,000 Everest Control Valves - Purchase ERW,,,,0,0,0,0,40,0,0,0,,2006-04-10 08:00,2006-06-16 17:00,2009-01-02 08:00,2009-01-02 08:00,,2007-01-27 00:00,2007-01-27 00:00,,,2006-04-10 08:00,2006-04-14 17:00,,,,,PT_Normal,,,,,7C+rNyDLS8upr0HpAqgavQ,3+aOy4TqTU26hPH6RGObAh,,,N,0,0,,,2007-02-01 02:43,2007-02-04 01:05,hbe4678,hbe4678,,,0
3490,12459671,14517,6816182,13330,1,100,N,N,N,CP_Units,TT_Task,DT_FixedDUR2,RV_OK,TK_Complete,EK000I221D,000 Everest Control Valves - Technical Evaluation,,,,0,0,0,0,40,0,0,0,,2005-07-26 00:00,2005-08-10 00:00,2009-01-02 08:00,2009-01-02 08:00,,2007-01-27 00:00,2007-01-27 00:00,,,2005-10-24 08:00,2005-10-28 17:00,,,,,PT_Normal,,,,,fX6+xJ51T3uy1+EbH+28Ng,lVFhVBNbzUiz7++Prdrm8h,,,N,0,0,,,2007-02-01 02:43,2007-02-04 01:05,hbe4678,hbe4678,,,0
3491,12459672,14517,6816182,13330,1,100,N,N,N,CP_Units,TT_Task,DT_FixedDUR2,RV_OK,TK_Complete,EK000I221A,000 Everest Control Valves - Issue Inquiry Req,,,,0,0,0,0,80,0,0,0,,2005-09-12 00:00,2005-09-16 00:00,2009-01-02 08:00,2009-01-02 08:00,,2007-01-27 00:00,2007-01-27 00:00,,,2005-09-28 08:00,2005-10-11 17:00,,,,,PT_Normal,,,,,VzWNHS7MTOiCMXXcWWVvQg,lFm0FZqFQEKBqXrpOvXbXR,,,N,0,0,,,2007-02-01 02:43,2007-02-04 01:05,hbe4678,hbe4678,,,0
3492,12459673,14517,6816182,13330,1,100,N,N,N,CP_Units,TT_Task,DT_FixedDUR2,RV_OK,TK_Complete,EK000I444M,Develop Final Deign Basis - Shelters/ Analyzers,,,,0,0,0,0,200,0,0,0,,2006-03-20 00:00,2006-04-21 17:00,2007-09-11 08:01,2007-09-11 08:01,,2007-01-27 00:00,2007-01-27 00:00,,,2006-04-03 08:00,2006-05-05 17:00,,,,,PT_Normal,,,,,JZc8wP8KQuWq0vV3cAFmLg,HEQrUAxJqk64G/TR5f6s+h,,,N,0,0,,,2007-02-01 02:43,2007-02-04 01:05,hbe4678,hbe4678,,,0
3493,12459674,14517,6816182,13330,1,100,N,N,N,CP_Units,TT_Task,DT_FixedDUR2,RV_OK,TK_Complete,EK000I444B,Develop Final Design Basis - Shelters/ Analyzers,,,,0,0,0,0,200,0,0,0,,2006-03-20 00:00,2006-04-21 17:00,2007-09-11 08:01,2007-09-11 08:01,,2007-01-27 00:00,2007-01-27 00:00,,,2006-04-03 08:00,2006-05-05 17:00,,,,,PT_Normal,,,,,Iin8YuUVT2OpFnh/a11REw,HEQrUAxJqk64G/TR5f6s+h,,,N,0,0,,,2007-02-01 02:43,2007-02-04 01:05,hbe4678,hbe4678,,,0
3494,12459675,14517,6816182,13330,1,100,N,N,N,CP_Units,TT_Task,DT_FixedDUR2,RV_OK,TK_Complete,EK000I444E,Final Tech Evaluation - Shelters/ Analyzers,,,,0,0,0,0,80,0,0,0,,2006-06-19 08:00,2006-06-29 00:00,2007-09-11 08:01,2007-09-11 08:01,,2007-01-27 00:00,2007-01-27 00:00,,,2006-06-19 08:00,2006-06-30 17:00,,,,,PT_Normal,,,,,NK5N2DXaQe6X+NA302bqHA,HEQrUAxJqk64G/TR5f6s+h,,,N,0,0,,,2007-02-01 02:43,2007-02-04 01:05,hbe4678,hbe4678,,,0
3495,12459676,14517,6816182,13330,1,100,N,N,N,CP_Units,TT_Task,DT_FixedDUR2,RV_OK,TK_Complete,EK000I444F,Planning V. Data - Shelters/ Analyzers,,,,0,0,0,0,160,0,0,0,,2006-03-27 08:00,2006-10-06 00:00,2007-09-11 08:01,2007-09-11 08:01,,2007-01-27 00:00,2007-01-27 00:00,,,2006-03-27 08:00,2006-04-21 17:00,,,,,PT_Normal,,,,,7yPww7YaTxae21aKBgdrjQ,lxZvB6UYH0SbDcksuDqOEA,,,N,0,0,,,2007-02-01 02:43,2007-02-04 01:05,hbe4678,hbe4678,,,0
3496,12459677,14517,6816182,13330,1,100,N,N,N,CP_Units,TT_Task,DT_FixedDUR2,RV_OK,TK_Complete,EK000I444G,Review / Approve V. Data - Shelters/ Analyzers,,,,0,0,0,0,80,0,0,0,2006-10-09 00:00,2006-10-09 08:00,2006-10-13 17:00,2007-09-11 08:01,2007-09-11 08:01,,2007-01-27 00:00,2007-01-27 00:00,,,2006-10-09 08:00,2006-10-20 17:00,,,,CS_MSOA,PT_Normal,,,,,q5Mi/HYESju9Vt5W0AlRWw,HiQxsckT6EqoliW6wkKicA,,,N,0,0,,,2007-02-01 02:43,2007-02-04 01:05,hbe4678,hbe4678,,,0
3497,12459678,14517,6816182,13330,1,100,N,N,N,CP_Units,TT_Task,DT_FixedDUR2,RV_OK,TK_Complete,EK000I3541,ITCC - Develop Purchase T-Req,,,,0,0,0,0,40,0,0,0,,2006-03-30 00:00,2006-04-05 00:00,2007-04-16 08:00,2007-04-16 08:00,,2007-01-27 00:00,2007-01-27 00:00,,,2006-04-10 08:00,2006-04-14 17:00,,,,,PT_Normal,,,,,V8qW5zbDRXWvthuxhxEs3w,r/Yb4YLnWUW0c0WQZVYN9B,,,N,0,0,,,2007-02-01 02:43,2007-02-04 01:05,hbe4678,hbe4678,,,0
3498,12459679,14517,6816182,13330,1,100,N,N,N,CP_Units,TT_Task,DT_FixedDUR2,RV_OK,TK_Complete,EK000I3542,ITCC - Final Tech Evaluation for Purchase,,,,0,0,0,0,40,0,0,0,,2006-05-01 08:00,2006-05-04 00:00,2007-04-16 08:00,2007-04-16 08:00,,2007-01-27 00:00,2007-01-27 00:00,,,2006-05-01 08:00,2006-05-05 17:00,,,,,PT_Normal,,,,,DaLGGE48SjGfPQyNO6LCnQ,QMCPdFZQG0qfojjdTIBgzR,,,N,0,0,,,2007-02-01 02:43,2007-02-04 01:05,hbe4678,hbe4678,,,0
3499,12459680,14517,6816182,13330,1,100,N,N,N,CP_Units,TT_Task,DT_FixedDUR2,RV_OK,TK_Complete,PK000I352J,SIS - Planning V. Data,,,,0,0,0,0,160,0,0,0,,2006-03-27 08:00,2006-08-01 00:00,2007-04-16 08:00,2007-04-16 08:00,,2007-01-27 00:00,2007-01-27 00:00,,,2006-03-27 08:00,2006-04-21 17:00,,,,,PT_Normal,,,,,FdPO18IeRIa0nCGjgzbWFw,RqG2E3yL9kW26g2idNngHR,,,N,0,0,,,2007-02-01 02:43,2007-02-04 01:05,hbe4678,hbe4678,,,0
3500,12459681,14517,6816182,13330,1,100,N,N,N,CP_Units,TT_Task,DT_FixedDUR2,RV_OK,TK_Complete,EK000I352M,SIS - Review / Approve V. Data,,,,0,0,0,0,40,0,0,0,,2006-08-02 00:00,2006-08-07 00:00,2007-04-16 08:00,2007-04-16 08:00,,2007-01-27 00:00,2007-01-27 00:00,,,2006-07-31 08:00,2006-08-04 17:00,,,,,PT_Normal,,,,,8R9QcFgbTHCcUpL/TPT0KA,3P0IFs26tECj6dEKlreZGB,,,N,0,0,,,2007-02-01 02:43,2007-02-04 01:05,hbe4678,hbe4678,,,0
3501,12459682,14517,6816182,13330,1,100,N,N,N,CP_Units,TT_Task,DT_FixedDUR2,RV_OK,TK_Complete,EK000I3520,SIS - Develop Final Design Basis,,,,0,0,0,0,240,0,0,0,,2006-02-27 08:00,2006-04-12 00:00,2007-04-16 08:00,2007-04-16 08:00,,2007-01-27 00:00,2007-01-27 00:00,,,2006-02-27 08:00,2006-04-07 17:00,,,,,PT_Normal,,,,,9gONQGU0TTy9eHb3bGOnVg,SBTzDmwYCkq2Kct7KjUkxR,,,N,0,0,,,2007-02-01 02:43,2007-02-04 01:05,hbe4678,hbe4678,,,0
3502,12459683,14517,6816182,13330,1,100,N,N,N,CP_Units,TT_Task,DT_FixedDUR2,RV_OK,TK_Complete,EK000I3521,SIS - Develop Purchase T-Req,,,,0,0,0,0,40,0,0,0,,2006-05-01 00:00,2006-05-04 00:00,2007-04-16 08:00,2007-04-16 08:00,,2007-01-27 00:00,2007-01-27 00:00,,,2006-05-22 08:00,2006-05-26 17:00,,,,,PT_Normal,,,,,ovpsXSslSRezqsRYm04DVQ,r/Yb4YLnWUW0c0WQZVYN9B,,,N,0,0,,,2007-02-01 02:43,2007-02-04 01:05,hbe4678,hbe4678,,,0
3503,12459684,14517,6816182,13330,1,100,N,N,N,CP_Units,TT_Task,DT_FixedDUR2,RV_OK,TK_Complete,EK000I3522,SIS - Final Tech Evaluation for Purchase,,,,0,0,0,0,40,0,0,0,,2006-05-30 08:00,2006-06-01 00:00,2007-04-16 08:00,2007-04-16 08:00,,2007-01-27 00:00,2007-01-27 00:00,,,2006-05-30 08:00,2006-06-05 17:00,,,,,PT_Normal,,,,,KWHw/2RMTjeT+XsBGpN1ZQ,QMCPdFZQG0qfojjdTIBgzR,,,N,0,0,,,2007-02-01 02:43,2007-02-04 01:05,hbe4678,hbe4678,,,0
3504,12459685,14517,6816182,13330,1,100,N,N,N,CP_Units,TT_Task,DT_FixedDUR2,RV_OK,TK_Complete,EK000I3523,SIS - Software Programming by KBR,,,,0,0,0,0,720,0,0,0,,2006-05-19 00:00,2006-10-23 00:00,2007-04-16 08:00,2007-04-16 08:00,,2007-01-27 00:00,2007-01-27 00:00,,,2006-06-13 08:00,2006-10-16 17:00,,,,,PT_Normal,,,,,WmScwFpaRFerpOWjOmdxWg,juK2BxVNXE+q2xbuln1bsB,,,N,0,0,,,2007-02-01 02:43,2007-02-04 01:05,hbe4678,hbe4678,,,0
3505,12459686,14517,6816182,13330,1,100,N,N,N,CP_Units,TT_Task,DT_FixedDUR2,RV_OK,TK_Complete,EK000I354A,ITCC - Engr ERW Issued,,,,0,0,0,0,200,0,0,0,,2005-06-13 00:00,2005-08-22 08:00,2007-04-16 08:00,2007-04-16 08:00,,2007-01-27 00:00,2007-01-27 00:00,,,2005-06-27 08:00,2005-08-02 17:00,,,,,PT_Normal,,,,,oby8p7/+R1qj/9hMXH++iQ,FdLeKqB5c0mBHKS7918zUB,,,N,0,0,,,2007-02-01 02:43,2007-02-04 01:05,hbe4678,hbe4678,,,0
3506,12459687,14517,6816182,13330,1,100,N,N,N,CP_Units,TT_Task,DT_FixedDUR2,RV_OK,TK_Complete,EK000I354D,ITCC - Tech Evaluation,,,,0,0,0,0,80,0,0,0,,2005-11-14 08:00,2006-01-12 00:00,2007-04-16 08:00,2007-04-16 08:00,,2007-01-27 00:00,2007-01-27 00:00,,,2005-11-14 08:00,2005-11-25 17:00,,,,,PT_Normal,,,,,hvNxTwvZTZWQa2p1992Uew,srt1S630hUKq3BaUKgCDER,,,N,0,0,,,2007-02-01 02:43,2007-02-04 01:05,hbe4678,hbe4678,,,0
3507,12459688,14517,6816182,13330,1,100,N,N,N,CP_Units,TT_Task,DT_FixedDUR2,RV_OK,TK_Complete,EK000IC351,DCS - Develop Purchase T-Req,,,,0,0,0,0,40,0,0,0,,2005-11-04 08:00,2005-12-08 00:00,2007-04-16 08:00,2007-04-16 08:00,,2007-01-27 00:00,2007-01-27 00:00,,,2005-11-04 08:00,2005-11-10 17:00,,,,,PT_Normal,,,,,vMkeTh0OR72y6u7C4R21QQ,,,,N,0,0,,,2007-02-01 02:43,2007-02-04 01:05,hbe4678,hbe4678,,,0
3508,12459689,14517,6816182,13330,1,100,N,N,N,CP_Units,TT_Task,DT_FixedDUR2,RV_OK,TK_Complete,EK000IC352,DCS - Final Tech Evaluation for Purchase,,,,0,0,0,0,40,0,0,0,,2005-12-13 08:00,2005-12-15 17:00,2007-04-16 08:00,2007-04-16 08:00,,2007-01-27 00:00,2007-01-27 00:00,,,2005-12-13 08:00,2005-12-19 17:00,,,,,PT_Normal,,,,,i8qEYZRuQo2k10d6iA9IJw,,,,N,0,0,,,2007-02-01 02:43,2007-02-04 01:05,hbe4678,hbe4678,,,0
3509,12459690,14517,6816182,13330,1,100,N,N,N,CP_Units,TT_Task,DT_FixedDUR2,RV_OK,TK_Complete,EK000IC350,DCS - Develop Design Basis,,,,0,0,0,0,240,0,0,0,,2005-09-12 00:00,2005-11-03 17:00,2007-04-16 08:00,2007-04-16 08:00,,2007-01-27 00:00,2007-01-27 00:00,,,2005-09-23 08:00,2005-11-03 17:00,,,,,PT_Normal,,,,,t4LLexdAQHCUgYYc9XSr9A,,,,N,0,0,,,2007-02-01 02:43,2007-02-04 01:05,hbe4678,hbe4678,,,0
3510,12459691,14517,6816182,13330,1,100,N,N,N,CP_Units,TT_Task,DT_FixedDUR2,RV_OK,TK_Complete,EK000IC353,DCS - Software Programming by KBR,,,,0,0,0,0,1304,0,0,0,,2006-02-15 00:00,2006-10-27 17:00,2007-04-16 08:00,2007-04-16 08:00,,2007-01-27 00:00,2007-01-27 00:00,,,2006-07-21 08:00,2007-03-06 17:00,,,,,PT_Normal,,,,,QAi8GilbQ+WMXXt3UxoZng,,,,N,0,0,,,2007-02-01 02:43,2007-02-04 01:05,hbe4678,hbe4678,,,0
3511,12459692,14517,6816182,13330,1,100,N,N,N,CP_Units,TT_Task,DT_FixedDUR2,RV_OK,TK_Complete,EK000I352A,SIS - Engr ERW Issued,,,,0,0,0,0,240,0,0,0,,2005-08-22 00:00,2005-09-02 00:00,2007-04-16 08:00,2007-04-16 08:00,,2007-01-27 00:00,2007-01-27 00:00,,,2005-08-30 08:00,2005-10-10 17:00,,,,,PT_Normal,,,,,7bWi9GO+QzKd0oU+RJYZdA,FdLeKqB5c0mBHKS7918zUB,,,N,0,0,,,2007-02-01 02:43,2007-02-04 01:05,hbe4678,hbe4678,,,0
3512,12459693,14517,6816182,13330,1,100,N,N,N,CP_Units,TT_Task,DT_FixedDUR2,RV_OK,TK_Complete,EK000I352D,SIS - Tech Evaluation,,,,0,0,0,0,80,0,0,0,,2005-10-31 00:00,2005-12-08 00:00,2007-04-16 08:00,2007-04-16 08:00,,2007-01-27 00:00,2007-01-27 00:00,,,2005-11-02 08:00,2005-11-15 17:00,,,,,PT_Normal,,,,,5FbUyuF9Q+eodAeOmbbbZA,srt1S630hUKq3BaUKgCDER,,,N,0,0,,,2007-02-01 02:43,2007-02-04 01:05,hbe4678,hbe4678,,,0
3513,12459694,14517,6816182,13330,1,100,N,N,N,CP_Units,TT_Task,DT_FixedDUR2,RV_OK,TK_Complete,EK000I230A,Issue Preliminary ERW Pkg - On/Off Valves,,,,0,0,0,0,72,0,0,0,,2005-07-05 08:00,2005-07-15 17:00,2008-12-12 17:00,2008-12-12 17:00,,2007-01-27 00:00,2007-01-27 00:00,,,2005-07-05 08:00,2005-07-15 17:00,,,,,PT_Normal,,,,,D9VZMOr8QHyxUgKrYDML7g,CKWBjNZa7kG8RaiMq/RMDx,,,N,0,0,,,2007-02-01 02:43,2007-02-04 01:05,hbe4678,hbe4678,,,0
3514,12459695,14517,6816182,13330,1,100,N,N,N,CP_Units,TT_Task,DT_FixedDUR2,RV_OK,TK_Complete,EK000I220A,Issue Preliminary ERW Pkg - MOV Valves,,,,0,0,0,0,80,0,0,0,,2005-06-13 00:00,2005-06-30 17:00,2008-12-12 17:00,2008-12-12 17:00,,2007-01-27 00:00,2007-01-27 00:00,,,2005-06-03 08:00,2005-06-16 17:00,,,,,PT_Normal,,,,,956t4jIxTqGCmx11c4JTVg,lFm0FZqFQEKBqXrpOvXbXR,,,N,0,0,,,2007-02-01 02:43,2007-02-04 01:05,hbe4678,hbe4678,,,0
3515,12459696,14517,6816182,13330,1,100,N,N,N,CP_Units,TT_Task,DT_FixedDUR2,RV_OK,TK_Complete,EK000I444C,Develop / Issue T-Req - Shelters/ Analyzers,,,,0,0,0,0,80,0,0,0,,2006-05-01 08:00,2006-05-04 00:00,2007-09-11 08:01,2007-09-11 08:01,,2007-01-27 00:00,2007-01-27 00:00,,,2006-05-01 08:00,2006-05-12 17:00,,,,,PT_Normal,,,,,sDWidgJ+T5iemDxqk2VIHA,MK3+EQghykarvjeRRAekeh,,,N,0,0,,,2007-02-01 02:43,2007-02-04 01:05,hbe4678,hbe4678,,,0
3516,12459697,14517,6816182,13330,1,100,N,N,N,CP_Units,TT_Task,DT_FixedDUR2,RV_OK,TK_Complete,EK000I444D,Technical Evaluation - Analyzer Shelter,,,,0,0,0,0,120,0,0,0,,2005-10-17 00:00,2006-01-11 00:00,2007-09-11 08:01,2007-09-11 08:01,,2007-01-27 00:00,2007-01-27 00:00,,,2005-11-14 08:00,2005-12-02 17:00,,,,,PT_Normal,,,,,C94yadx9RuSOewhSt1Dj0A,umMh/lRXkEGHDiwAwyOJ0B,,,N,0,0,,,2007-02-01 02:43,2007-02-04 01:05,hbe4678,hbe4678,,,0
3517,12459698,14517,6816182,13330,1,100,N,N,N,CP_Units,TT_Task,DT_FixedDUR2,RV_OK,TK_Complete,EK000I444A,Develop & Issue Inquiry ERW - Analyzer Shelter,,,,0,0,0,0,80,0,0,0,,2005-09-05 08:00,2005-09-16 17:00,2007-09-11 08:01,2007-09-11 08:01,,2007-01-27 00:00,2007-01-27 00:00,,,2005-09-05 08:00,2005-09-16 17:00,,,,,PT_Normal,,,,,bIlbeN+HSBuQIm8I5FIl0A,ZcTd3hx1UEecK78PKYoyJB,,,N,0,0,,,2007-02-01 02:43,2007-02-04 01:05,hbe4678,hbe4678,,,0
3518,12459699,14517,6816182,13330,1,100,N,N,N,CP_Units,TT_Task,DT_FixedDUR2,RV_OK,TK_Complete,EK00012210,"000 Everest Control Valves - D/S,Sizing,Tech Eval",,,,0,0,0,0,80,0,0,0,,2006-03-06 00:00,2006-04-05 00:00,2009-01-02 08:00,2009-01-02 08:00,,2007-01-27 00:00,2007-01-27 00:00,,,2006-02-27 08:00,2006-03-10 17:00,,,,,PT_Normal,,,,,GdCy60bOQtOsl4lQN6ACNw,qpKSH8jov0a82dTtoME9qB,,,N,0,0,,,2007-02-01 02:43,2007-02-04 01:05,hbe4678,hbe4678,,,0
3519,12459700,14517,6816182,13330,1,100,N,N,N,CP_Units,TT_Task,DT_FixedDUR2,RV_OK,TK_Complete,EK000I112D,Technical Evaluation - Venturis,,,,0,0,0,0,40,0,0,0,,2005-07-11 00:00,2005-07-15 00:00,2006-12-25 08:00,2006-12-25 08:00,,2007-01-27 00:00,2007-01-27 00:00,,,2005-08-29 08:00,2005-09-02 17:00,,,,,PT_Normal,,,,,J6TjJ60LQpKRpPYO7HwXbQ,waaNBih/YkyQVKzoRt+Gkx,,,N,0,0,,,2007-02-01 02:43,2007-02-04 01:05,hbe4678,hbe4678,,,0
3520,12459701,14517,6816182,13330,1,100,N,N,N,CP_Units,TT_Task,DT_FixedDUR2,RV_OK,TK_Complete,EK000I110D,Technical Evaluation - Orific Plates,,,,0,0,0,0,48,0,0,0,,2005-06-27 08:00,2005-07-11 00:00,2006-12-25 08:00,2006-12-25 08:00,,2007-01-27 00:00,2007-01-27 00:00,,,2005-06-27 08:00,2005-07-06 17:00,,,,,PT_Normal,,,,,Pe4EUcZ7S02mhFHxIyxkoA,waaNBih/YkyQVKzoRt+Gkx,,,N,0,0,,,2007-02-01 02:43,2007-02-04 01:05,hbe4678,hbe4678,,,0
3521,12459702,14517,6816182,13330,1,100,N,N,N,CP_Units,TT_Task,DT_FixedDUR2,RV_OK,TK_Complete,EK000I621D,Technical Evaluation - Temperature Elements,,,,0,0,0,0,8,0,0,0,,2005-08-22 00:00,2005-08-26 00:00,2007-03-13 08:00,2007-03-13 08:00,,2007-01-27 00:00,2007-01-27 00:00,,,2005-08-29 08:00,2005-08-29 17:00,,,,,PT_Normal,,,,,g7qI5+4pQbGeaRScX2AZhg,umMh/lRXkEGHDiwAwyOJ0B,,,N,0,0,,,2007-02-01 02:43,2007-02-04 01:05,hbe4678,hbe4678,,,0
3522,12459703,14517,6816182,13330,1,100,N,N,N,CP_Units,TT_Task,DT_FixedDUR2,RV_OK,TK_Complete,EK000I612D,Technical Evaluation - Differential Pressure Gauges,,,,0,0,0,0,64,0,0,0,,2005-06-27 08:00,2005-07-11 00:00,2007-03-08 08:00,2007-03-08 08:00,,2007-01-27 00:00,2007-01-27 00:00,,,2005-06-27 08:00,2005-07-08 17:00,,,,,PT_Normal,,,,,2+pZUe4gRqWXA30g88ZwyA,umMh/lRXkEGHDiwAwyOJ0B,,,N,0,0,,,2007-02-01 02:43,2007-02-04 01:05,hbe4678,hbe4678,,,0
3523,12459704,14517,6816182,13330,1,100,N,N,N,CP_Units,TT_Task,DT_FixedDUR2,RV_OK,TK_Complete,EK000I611D,Technical Evaluation - Pressure Gauges,,,,0,0,0,0,64,0,0,0,,2005-06-27 08:00,2005-07-11 00:00,2007-04-19 08:00,2007-04-19 08:00,,2007-01-27 00:00,2007-01-27 00:00,,,2005-06-27 08:00,2005-07-08 17:00,,,,,PT_Normal,,,,,L8ZH106uShGUCaMK8CD+0g,umMh/lRXkEGHDiwAwyOJ0B,,,N,0,0,,,2007-02-01 02:43,2007-02-04 01:05,hbe4678,hbe4678,,,0
3524,12459705,14517,6816182,13330,1,100,N,N,N,CP_Units,TT_Task,DT_FixedDUR2,RV_OK,TK_Complete,EK000I618D,Technical Evaluation - Temperature Gauges,,,,0,0,0,0,8,0,0,0,,2005-08-22 00:00,2005-08-26 00:00,2009-04-27 00:00,2009-04-27 00:00,,2007-01-27 00:00,2007-01-27 00:00,,,2005-08-29 08:00,2005-08-29 17:00,,,,,PT_Normal,,,,,U8uCFGvySm2AicF6aeJq0A,umMh/lRXkEGHDiwAwyOJ0B,,,N,0,0,,,2007-02-01 02:43,2007-02-04 01:05,hbe4678,hbe4678,,,0
3525,12459706,14517,6816182,13330,1,100,N,N,N,CP_Units,TT_Task,DT_FixedDUR2,RV_OK,TK_Complete,EK000I616D,Technical Evaluation - Steam Drum Lvl Gauges,,,,0,0,0,0,64,0,0,0,,2005-06-27 08:00,2005-07-11 00:00,2007-07-09 08:00,2007-07-09 08:00,,2007-01-27 00:00,2007-01-27 00:00,,,2005-06-27 08:00,2005-07-08 17:00,,,,,PT_Normal,,,,,aET6/mQ0QVaPMDSf19A3iQ,umMh/lRXkEGHDiwAwyOJ0B,,,N,0,0,,,2007-02-01 02:43,2007-02-04 01:05,hbe4678,hbe4678,,,0
3526,12459707,14517,6816182,13330,1,100,N,N,N,CP_Units,TT_Task,DT_FixedDUR2,RV_OK,TK_Complete,EK000I617D,Technical Evaluation - Magnetic Lvl Gauges,,,,0,0,0,0,64,0,0,0,,2005-06-27 08:00,2005-07-11 00:00,2007-06-22 08:00,2007-06-22 08:00,,2007-01-27 00:00,2007-01-27 00:00,,,2005-06-27 08:00,2005-07-08 17:00,,,,,PT_Normal,,,,,17G1BemeSbqfFM3TWLVk9g,umMh/lRXkEGHDiwAwyOJ0B,,,N,0,0,,,2007-02-01 02:43,2007-02-04 01:05,hbe4678,hbe4678,,,0
3527,12459708,14517,6816182,13330,1,100,N,N,N,CP_Units,TT_Task,DT_FixedDUR2,RV_OK,TK_Complete,EK000I623D,Technical Evaluation - Multi-Point Thermocouples,,,,0,0,0,0,8,0,0,0,,2005-08-22 00:00,2005-08-26 00:00,2007-05-25 08:00,2007-05-25 08:00,,2007-01-27 00:00,2007-01-27 00:00,,,2005-08-29 08:00,2005-08-29 17:00,,,,,PT_Normal,,,,,obF7ta+bTuWIb2xPUoQvXQ,umMh/lRXkEGHDiwAwyOJ0B,,,N,0,0,,,2007-02-01 02:43,2007-02-04 01:05,hbe4678,hbe4678,,,0
3528,12459709,14517,6816182,13330,1,100,N,N,N,CP_Units,TT_Task,DT_FixedDUR2,RV_OK,TK_Complete,EK000I131D,Technical Evaluation - Transmitters,,,,0,0,0,0,40,0,0,0,,2005-04-26 00:00,2005-06-23 00:00,2007-05-08 08:00,2007-05-08 08:00,,2007-01-27 00:00,2007-01-27 00:00,,,2005-07-05 08:00,2005-07-11 17:00,,,,,PT_Normal,,,,,nV/+YIeUSVGIf6Rtggv1QQ,,,,N,0,0,,,2007-02-01 02:43,2007-02-04 01:05,hbe4678,hbe4678,,,0
3529,12459710,14517,6816182,13330,1,100,N,N,N,CP_Units,TT_Task,DT_FixedDUR2,RV_OK,TK_Complete,EK000I230D,Technical Evaluation - On/Off Valves,,,,0,0,0,0,80,0,0,0,,2005-08-17 00:00,2005-08-24 00:00,2008-12-12 17:00,2008-12-12 17:00,,2007-01-27 00:00,2007-01-27 00:00,,,2005-08-29 08:00,2005-09-09 17:00,,,,,PT_Normal,,,,,UG8+0HoeTz61ErtsID3AgQ,Pmpx0eDjSk6xlKebAvb5Ox,,,N,0,0,,,2007-02-01 02:43,2007-02-04 01:05,hbe4678,hbe4678,,,0
3530,12459711,14517,6816182,13330,1,100,N,N,N,CP_Units,TT_Task,DT_FixedDUR2,RV_OK,TK_Complete,EK000I210D,000 Control Valves - Technical Evaluation,,,,0,0,0,0,40,0,0,0,,2005-04-20 00:00,2005-06-23 00:00,2009-02-13 17:00,2009-02-13 17:00,,2007-01-27 00:00,2007-01-27 00:00,,,2005-07-05 08:00,2005-07-11 17:00,,,,,PT_Normal,,,,,v+uUeTKZT06y3q6wLLXexQ,,,,N,0,0,,,2007-02-01 02:43,2007-02-04 01:05,hbe4678,hbe4678,,,0
3531,12459712,14517,6816182,13330,1,100,N,N,N,CP_Units,TT_Task,DT_FixedDUR2,RV_OK,TK_Complete,EK000I220D,Technical Evaluation - MOV's,,,,0,0,0,0,88,0,0,0,,2005-08-16 00:00,2005-08-23 00:00,2009-01-02 17:00,2009-01-02 17:00,,2007-01-27 00:00,2007-01-27 00:00,,,2005-08-29 08:00,2005-09-12 17:00,,,,,PT_Normal,,,,,KnLIKbxrRLGp9XC3Y+HlZQ,waaNBih/YkyQVKzoRt+Gkx,,,N,0,0,,,2007-02-01 02:43,2007-02-04 01:05,hbe4678,hbe4678,,,0
3532,12459713,14517,6816182,13330,1,100,N,N,N,CP_Units,TT_Task,DT_FixedDUR2,RV_OK,TK_Complete,EK000I116D,Technical Evaluation - Wedge Flow Meters,,,,0,0,0,0,48,0,0,0,,2005-06-27 08:00,2005-07-11 00:00,2009-02-15 08:01,2009-02-15 08:01,,2007-01-27 00:00,2007-01-27 00:00,,,2005-06-27 08:00,2005-07-06 17:00,,,,,PT_Normal,,,,,GArhSy8eTnefTzkbjFrsKw,waaNBih/YkyQVKzoRt+Gkx,,,N,0,0,,,2007-02-01 02:43,2007-02-04 01:05,hbe4678,hbe4678,,,0
3533,12459714,14517,6816182,13330,1,100,N,N,N,CP_Units,TT_Task,DT_FixedDUR2,RV_OK,TK_Complete,EK000I115D,Technical Evaluation - Annubars,,,,0,0,0,0,48,0,0,0,,2005-06-27 08:00,2005-07-11 00:00,2009-01-09 08:00,2009-01-09 08:00,,2007-01-27 00:00,2007-01-27 00:00,,,2005-06-27 08:00,2005-07-06 17:00,,,,,PT_Normal,,,,,72INnaE7TqurcqSN8Jm/FA,3z+7y85KZEaM3J+Ud+Fyhx,,,N,0,0,,,2007-02-01 02:43,2007-02-04 01:05,hbe4678,hbe4678,,,0
3534,12459715,14517,6816182,13330,1,100,N,N,N,CP_Units,TT_Task,DT_FixedDUR2,RV_OK,TK_Complete,EK000I121D,Technical Evaluation - Vortex Meters,,,,0,0,0,0,104,0,0,0,,2005-06-27 08:00,2005-07-11 00:00,2009-02-12 08:00,2009-02-12 08:00,,2007-01-27 00:00,2007-01-27 00:00,,,2005-06-27 08:00,2005-07-15 17:00,,,,,PT_Normal,,,,,NkYIv9hgQs2sh0ZgorlhhA,3z+7y85KZEaM3J+Ud+Fyhx,,,N,0,0,,,2007-02-01 02:43,2007-02-04 01:05,hbe4678,hbe4678,,,0
3535,12459716,14517,6816182,13330,1,100,N,N,N,CP_Units,TT_Task,DT_FixedDUR2,RV_OK,TK_Complete,EK000I127D,Magnetic Flow Meters - Technical Evaluation,,,,0,0,0,0,192,0,0,0,,2005-06-27 08:00,2005-07-27 00:00,2009-02-15 08:01,2009-02-15 08:01,,2007-01-27 00:00,2007-01-27 00:00,,,2005-06-27 08:00,2005-08-01 17:00,,,,,PT_Normal,,,,,OX72zLiRQN2BJ4KMQ0N/ow,3z+7y85KZEaM3J+Ud+Fyhx,,,N,0,0,,,2007-02-01 02:43,2007-02-04 01:05,hbe4678,hbe4678,,,0
3536,12459717,14517,6816182,13330,1,100,N,N,N,CP_Units,TT_Task,DT_FixedDUR2,RV_OK,TK_Complete,EK000I122D,Technical Evaluation - Coriolis Meters,,,,0,0,0,0,144,0,0,0,,2005-06-27 08:00,2005-07-11 00:00,2009-02-15 08:01,2009-02-15 08:01,,2007-01-27 00:00,2007-01-27 00:00,,,2005-06-27 08:00,2005-07-22 17:00,,,,,PT_Normal,,,,,9mHWHOGPQCOp33v35JP2lA,3z+7y85KZEaM3J+Ud+Fyhx,,,N,0,0,,,2007-02-01 02:43,2007-02-04 01:05,hbe4678,hbe4678,,,0
3537,12459718,14517,6816182,13330,1,100,N,N,N,CP_Units,TT_Task,DT_FixedDUR2,RV_OK,TK_Complete,EK000I124D,Technical Evaluation - Rotameters,,,,0,0,0,0,144,0,0,0,,2005-06-27 08:00,2005-07-11 00:00,2009-01-29 08:00,2009-01-29 08:00,,2007-01-27 00:00,2007-01-27 00:00,,,2005-06-27 08:00,2005-07-22 17:00,,,,,PT_Normal,,,,,g/xQys1UT5ymNd7KUCAnvQ,3z+7y85KZEaM3J+Ud+Fyhx,,,N,0,0,,,2007-02-01 02:43,2007-02-04 01:05,hbe4678,hbe4678,,,0
3538,12459719,14517,6816182,13330,1,100,N,N,N,CP_Units,TT_Task,DT_FixedDUR2,RV_OK,TK_Complete,PK000I354J,ITCC - Planning V. Data,,,,0,0,0,0,160,0,0,0,,2006-03-27 08:00,2006-07-27 00:00,2007-04-16 08:00,2007-04-16 08:00,,2007-01-27 00:00,2007-01-27 00:00,,,2006-03-27 08:00,2006-04-21 17:00,,,,,PT_Normal,,,,,soCayqadRSmHAG3UIzQJBg,RqG2E3yL9kW26g2idNngHR,,,N,0,0,,,2007-02-01 02:43,2007-02-04 01:05,hbe4678,hbe4678,,,0
3539,12459720,14517,6816182,13330,1,100,N,N,N,CP_Units,TT_Task,DT_FixedDUR2,RV_OK,TK_Complete,EK000I354M,ITCC - Review / Approve V. Data,,,,0,0,0,0,80,0,0,0,,2006-07-31 00:00,2006-08-21 17:00,2007-04-16 08:00,2007-04-16 08:00,,2007-01-27 00:00,2007-01-27 00:00,,,2006-07-25 08:00,2006-08-07 17:00,,,,,PT_Normal,,,,,5f05h0ULR5SEYyQ6UryB4g,3P0IFs26tECj6dEKlreZGB,,,N,0,0,,,2007-02-01 02:43,2007-02-04 01:05,hbe4678,hbe4678,,,0
3540,12459721,14517,6816182,13330,1,100,N,N,N,CP_Units,TT_Task,DT_FixedDUR2,RV_OK,TK_Complete,EK000I3540,ITCC - Develop Final Design Basis,,,,0,0,0,0,160,0,0,0,,2006-02-27 08:00,2006-04-04 00:00,2007-04-16 08:00,2007-04-16 08:00,,2007-01-27 00:00,2007-01-27 00:00,,,2006-02-27 08:00,2006-03-24 17:00,,,,,PT_Normal,,,,,seEeUuuISHmGAAlLu2rNvA,SBTzDmwYCkq2Kct7KjUkxR,,,N,0,0,,,2007-02-01 02:43,2007-02-04 01:05,hbe4678,hbe4678,,,0
3541,12459722,14517,6816182,13330,1,100,N,N,N,CP_Units,TT_Task,DT_FixedDUR2,RV_OK,TK_Complete,PK000IC35J,DCS - Planning V. Data,,,,0,0,0,0,160,0,0,0,,2005-11-17 00:00,2006-06-26 17:00,2007-04-16 08:00,2007-04-16 08:00,,2007-01-27 00:00,2007-01-27 00:00,,,2005-12-19 08:00,2006-01-17 17:00,,,,,PT_Normal,,,,,/rdV9gjeRNucGJoDC1Qurw,,,,N,0,0,,,2007-02-01 02:43,2007-02-04 01:05,hbe4678,hbe4678,,,0
3542,12459723,14517,6816182,13330,1,100,N,N,N,CP_Units,TT_Task,DT_FixedDUR2,RV_OK,TK_Complete,PK000IC35M,DCS - Review / Approve V. Data,,,,0,0,0,0,80,0,0,0,,2006-06-27 08:00,2006-07-20 17:00,2007-04-16 08:00,2007-04-16 08:00,,2007-01-27 00:00,2007-01-27 00:00,,,2006-06-27 08:00,2006-07-10 17:00,,,,,PT_Normal,,,,,TRf53Y6iSVupu5O3WoUsBw,,,,N,0,0,,,2007-02-01 02:43,2007-02-04 01:05,hbe4678,hbe4678,,,0
3543,12459724,14517,6816182,13330,1,100,N,N,N,CP_Units,TT_Task,DT_FixedDUR2,RV_OK,TK_Complete,EK000IC005,Develop Typical SIL Values Worksheet,,,,0,,0,,80,,,0,,2005-03-21 08:00,2005-04-01 17:00,2009-02-15 08:01,2009-02-15 08:01,,2007-01-27 00:00,2007-01-27 00:00,,,2005-03-21 08:00,2005-04-01 17:00,,,,,PT_Normal,,,,,YPRUkLe3R4O5onxNA9+92g,,,,N,,,,,2007-02-01 02:43,2007-02-04 01:05,hbe4678,hbe4678,,,0
3544,12459725,14517,6816182,13330,1,100,N,N,N,CP_Units,TT_Task,DT_FixedDUR2,RV_OK,TK_Complete,EK000IC010,Make decision of FF vs. Traditional DCS system,,,,0,0,0,0,72,0,0,0,,2005-05-31 08:00,2005-06-17 00:00,2007-04-16 08:00,2007-04-16 08:00,,2007-01-27 00:00,2007-01-27 00:00,,,2005-05-31 08:00,2005-06-10 17:00,,,,,PT_Normal,,,,,FIvpNYo+SRuTFcnE+Q/fxA,,,,N,0,0,,,2007-02-01 02:43,2007-02-04 01:05,hbe4678,hbe4678,,,0
3545,12459726,14517,6816182,13330,1,100,N,N,N,CP_Units,TT_Task,DT_FixedDUR2,RV_OK,TK_Complete,EK000IC015,Modify Package Equipment Spec for IEC basis,,,,0,,0,,80,,,0,,2005-03-07 08:00,2005-04-04 17:00,2006-12-25 08:00,2006-12-25 08:00,,2007-01-27 00:00,2007-01-27 00:00,,,2005-03-07 08:00,2005-03-18 17:00,,,,,PT_Normal,,,,,zb7Fdku8RpGuS0ZK/OKi3w,,,,N,,,,,2007-02-01 02:43,2007-02-04 01:05,hbe4678,hbe4678,,,0
3546,12459727,14517,6816182,13330,1,100,N,N,N,CP_Units,TT_Task,DT_FixedDUR2,RV_OK,TK_Complete,EK000IC020,Establlish data warehouse - Intools Basic Setup,,,,0,,0,,40,,,0,,2005-03-28 08:00,2005-04-08 17:00,2009-02-15 08:01,2009-02-15 08:01,,2007-01-27 00:00,2007-01-27 00:00,,,2005-03-28 08:00,2005-04-01 17:00,,,,,PT_Normal,,,,,xzX++d/TTvqp8xHDfuKC5w,,,,N,,,,,2007-02-01 02:43,2007-02-04 01:05,hbe4678,hbe4678,,,0
3547,12459728,14517,6816182,13330,1,100,N,N,N,CP_Units,TT_Task,DT_FixedDUR2,RV_OK,TK_Complete,EK000IC025,Review Instr. & Installation Details - ID Change,,,,0,,0,,0,,,0,,2005-03-28 08:00,2005-04-08 17:00,2006-12-25 08:00,2006-12-25 08:00,,2007-01-27 00:00,2007-01-27 00:00,,,2005-03-28 08:00,2005-03-28 08:00,,,,,PT_Normal,,,,,YMwsWLrMTGW6ockwrn+Qfg,,,,N,,,,,2007-02-01 02:43,2007-02-04 01:05,hbe4678,hbe4678,,,0
3548,12459729,14517,6816182,13330,1,100,N,N,N,CP_Units,TT_Task,DT_FixedDUR2,RV_OK,TK_Complete,EK000IC030,Develop & Issue FieldBus Main Instr Vendor ERW,,,,0,,0,,160,,,0,,2005-02-21 08:00,2005-04-07 17:00,2006-12-25 08:00,2006-12-25 08:00,,2007-01-27 00:00,2007-01-27 00:00,,,2005-02-21 08:00,2005-03-18 17:00,,,,,PT_Normal,,,,,lAnpz6g8Q+Sz2K3lR3r2kQ,,,,N,,,,,2007-02-01 02:43,2007-02-04 01:05,hbe4678,hbe4678,,,0
3549,12459730,14517,6816182,13330,1,100,N,N,N,CP_Units,TT_Task,DT_FixedDUR2,RV_OK,TK_Complete,EK000IC045,Develop & Issue CSE Work Plan,,,,0,0,0,,80,,0,0,,2005-03-28 08:00,2005-06-08 00:00,2009-02-15 08:01,2009-02-15 08:01,,2007-01-27 00:00,2007-01-27 00:00,,,2005-03-28 08:00,2005-04-08 17:00,,,,,PT_Normal,,,,,GtjJuPtRSs2KFJTFUuOasg,,,,N,0,0,,,2007-02-01 02:43,2007-02-04 01:05,hbe4678,hbe4678,,,0
3550,12459731,14517,6816182,13330,1,100,N,N,N,CP_Units,TT_Task,DT_FixedDUR2,RV_OK,TK_Complete,EK000IC35A,DCS - Engr ERW Issued,,,,0,0,0,0,24,0,0,0,,2005-03-07 00:00,2005-03-15 00:00,2007-04-16 08:00,2007-04-16 08:00,,2007-01-27 00:00,2007-01-27 00:00,,,2005-04-22 08:00,2005-04-26 17:00,,,,,PT_Normal,,,,,Kip1lUGwTym0e0Gzzw4OKg,,,,N,0,0,,,2007-02-01 02:43,2007-02-04 01:05,hbe4678,hbe4678,,,0
3551,12459732,14517,6816182,13330,1,100,N,N,N,CP_Units,TT_Task,DT_FixedDUR2,RV_OK,TK_Complete,EK000IC35D,DCS - Tech Evaluation,,,,0,0,0,0,80,0,0,0,,2005-04-14 00:00,2005-06-14 00:00,2007-04-16 08:00,2007-04-16 08:00,,2007-01-27 00:00,2007-01-27 00:00,,,2005-06-09 08:00,2005-06-22 17:00,,,,,PT_Normal,,,,,d9NUVL0CTY+h0XsUROXbfw,,,,N,0,0,,,2007-02-01 02:43,2007-02-04 01:05,hbe4678,hbe4678,,,0
3552,12459733,14517,6816182,13330,1,100,N,N,N,CP_Units,TT_Task,DT_FixedDUR2,RV_OK,TK_Complete,EK000IC36D,DCS (MIV) - Tech Evaluation,,,,0,0,0,0,80,0,0,0,,2005-05-16 00:00,2005-06-17 00:00,2007-04-16 08:00,2007-04-16 08:00,,2007-01-27 00:00,2007-01-27 00:00,,,2005-05-31 08:00,2005-06-13 17:00,,,,,PT_Normal,,,,,7Mjzf+2HR8CsXq5Vhphivw,,,,N,0,0,,,2007-02-01 02:43,2007-02-04 01:05,hbe4678,hbe4678,,,0
3553,12459734,14517,6816183,13330,1,100,N,N,N,CP_Units,TT_Task,DT_FixedDUR2,RV_OK,TK_Complete,EK000MB61E,Prepare & Issue Purchase ERW - MB610,,,,0,0,0,0,24,0,0,0,,2005-05-16 00:00,2005-05-23 00:00,2007-09-19 08:01,2007-09-19 08:01,,2007-01-27 00:00,2007-01-27 00:00,,,2005-06-06 08:00,2005-06-08 17:00,,,,,PT_Normal,,,,,k2kLYi4UT/K4Ecl8YkPkQg,,,,N,0,0,,,2007-02-01 02:43,2007-02-04 01:05,hbe4678,hbe4678,,,0
3554,12459735,14517,6816183,13330,1,100,N,N,N,CP_Units,TT_Task,DT_FixedDUR2,RV_OK,TK_Complete,EK000MB62C,Prepare & Issue Prelim. RFQ - MB621 to Proc.,,,,0,,0,,24,,,0,,2005-03-23 08:00,2005-03-25 17:00,2007-03-07 08:01,2007-03-07 08:01,,2007-01-27 00:00,2007-01-27 00:00,,,2005-03-23 08:00,2005-03-25 17:00,,,,,PT_Normal,,,,,FpDfiYT+TXSs6GgEITJ4iQ,,,,N,,,,,2007-02-01 02:43,2007-02-04 01:05,hbe4678,hbe4678,,,0
3555,12459736,14517,6816183,13330,1,100,N,N,N,CP_Units,TT_Task,DT_FixedDUR2,RV_OK,TK_Complete,EK000MB62D,Technical Evaluation  - MB621,,,,0,0,0,0,40,0,0,0,,2005-04-29 08:00,2005-05-19 00:00,2007-03-07 08:01,2007-03-07 08:01,,2007-01-27 00:00,2007-01-27 00:00,,,2005-04-29 08:00,2005-05-05 17:00,,,,,PT_Normal,,,,,kbNz1iahTZS/G9A38iqVSw,,,,N,0,0,,,2007-02-01 02:43,2007-02-04 01:05,hbe4678,hbe4678,,,0
3556,12459737,14517,6816183,13330,1,100,N,N,N,CP_Units,TT_Task,DT_FixedDUR2,RV_OK,TK_Complete,EK000MB010,101-B Furnance Analytical - Convection Design,,,,0,0,0,,240,,0,0,,2005-03-21 08:00,2005-04-29 17:00,2007-02-07 08:01,2007-02-07 08:01,,2007-01-27 00:00,2007-01-27 00:00,,,2005-03-21 08:00,2005-04-29 17:00,,,,,PT_Normal,,,,,9BJfPIpgRpuvIi3i9xwSiw,,,,N,0,0,,,2007-02-01 02:43,2007-02-04 01:05,hbe4678,hbe4678,,,0
3557,12459738,14517,6816183,13330,1,100,N,N,N,CP_Units,TT_Task,DT_FixedDUR2,RV_OK,TK_Complete,EK000MB045,Catalyst Vac data sheets,,,,0,0,0,0,40,0,0,0,,2005-06-20 00:00,2005-06-27 17:00,2007-07-02 08:01,2007-07-02 08:01,,2007-01-27 00:00,2007-01-27 00:00,,,2005-07-06 08:00,2005-07-12 17:00,,,,,PT_Normal,,,,,ObUSIo3oSXGVSg3AOm+Uhg,,,,N,0,0,,,2007-02-01 02:43,2007-02-04 01:05,hbe4678,hbe4678,,,0
3558,12459739,14517,6816183,13330,1,100,N,N,N,CP_Units,TT_Task,DT_FixedDUR2,RV_OK,TK_Complete,EK000MB050,101-B Radiant coil design,,,,0,0,0,0,80,0,0,0,,2005-05-06 08:00,2005-05-13 00:00,2007-02-07 08:01,2007-02-07 08:01,,2007-01-27 00:00,2007-01-27 00:00,,,2005-05-20 08:00,2005-06-03 17:00,,,,,PT_Normal,,,,,yBUJa9bMTYiPbkOdNFZbVg,,,,N,0,0,,,2007-02-01 02:43,2007-02-04 01:05,hbe4678,hbe4678,,,0
3559,12459740,14517,6816183,13330,1,100,N,N,N,CP_Units,TT_Task,DT_FixedDUR2,RV_OK,TK_Complete,EK000MB055,101-B Radiant coil BOM,,,,0,0,0,0,80,0,0,0,,2005-05-16 00:00,2005-05-20 00:00,2007-02-07 08:01,2007-02-07 08:01,,2007-01-27 00:00,2007-01-27 00:00,,,2005-05-23 08:00,2005-06-06 17:00,,,,,PT_Normal,,,,,uwMg889cR3eRvyXMwwagcQ,,,,N,0,0,,,2007-02-01 02:43,2007-02-04 01:05,hbe4678,hbe4678,,,0
3560,12459741,14517,6816183,13330,1,100,N,N,N,CP_Units,TT_Task,DT_FixedDUR2,RV_OK,TK_Complete,EK000MB060,101-B General Arrangement Drawing,,,,0,0,0,0,120,0,0,0,,2005-03-28 00:00,2005-04-08 00:00,2007-05-23 08:00,2007-05-23 08:00,,2007-01-27 00:00,2007-01-27 00:00,,,2005-05-20 08:00,2005-06-10 17:00,,,,,PT_Normal,,,,,Sllp2a3cQMiVXyhL54fWdg,,,,N,0,0,,,2007-02-01 02:43,2007-02-04 01:05,hbe4678,hbe4678,,,0
3561,12459742,14517,6816183,13330,1,100,N,N,N,CP_Units,TT_Task,DT_FixedDUR2,RV_OK,TK_Complete,EK000MB070,101-B Foundation Loads,,,,0,0,0,0,80,0,0,0,,2005-05-02 00:00,2005-05-20 00:00,2007-05-23 08:00,2007-05-23 08:00,,2007-01-27 00:00,2007-01-27 00:00,,,2005-05-27 08:00,2005-06-10 17:00,,,,,PT_Normal,,,,,3cDPzGEuTXOMqTWGYQNQPA,,,,N,0,0,,,2007-02-01 02:43,2007-02-04 01:05,hbe4678,hbe4678,,,0
3562,12459743,14517,6816183,13330,1,100,N,N,N,CP_Units,TT_Task,DT_FixedDUR2,RV_OK,TK_Complete,EK000MB075,101-B Convection Coil BOM,,,,0,0,0,0,80,0,0,0,,2005-05-16 00:00,2005-05-20 00:00,2007-10-27 08:01,2007-10-27 08:01,,2007-01-27 00:00,2007-01-27 00:00,,,2005-06-28 08:00,2005-07-13 17:00,,,,,PT_Normal,,,,,hAvhJ2nzTUSThGDPDliJxg,,,,N,0,0,,,2007-02-01 02:43,2007-02-04 01:05,hbe4678,hbe4678,,,0
3563,12459744,14517,6816183,13330,1,100,N,N,N,CP_Units,TT_Task,DT_FixedDUR2,RV_OK,TK_Complete,EK000MB080,101-B Convection Coil Design,,,,0,0,0,0,120,0,0,0,,2005-05-06 00:00,2005-05-13 00:00,2007-10-27 08:01,2007-10-27 08:01,,2007-01-27 00:00,2007-01-27 00:00,,,2005-06-07 08:00,2005-06-27 17:00,,,,,PT_Normal,,,,,dNT57e+oRXyhrDfWwfHufQ,,,,N,0,0,,,2007-02-01 02:43,2007-02-04 01:05,hbe4678,hbe4678,,,0
3564,12459745,14517,6816183,13330,1,100,N,N,N,CP_Units,TT_Task,DT_FixedDUR2,RV_OK,TK_Complete,EK000MB085,101-B Radiant Detail Drawings - IFF,,,,0,0,0,,400,,0,0,,2005-03-28 08:00,2005-05-13 00:00,2007-02-07 08:01,2007-02-07 08:01,,2007-01-27 00:00,2007-01-27 00:00,,,2005-03-28 08:00,2005-06-06 17:00,,,,,PT_Normal,,,,,jfId7PsiSfaBolICTpiApA,,,,N,0,0,,,2007-02-01 02:43,2007-02-04 01:05,hbe4678,hbe4678,,,0
3565,12459746,14517,6816183,13330,1,100,N,N,N,CP_Units,TT_Task,DT_FixedDUR2,RV_OK,TK_Complete,EK000MB090,101-B Convection Detail Drawings - IFF,,,,0,0,0,,400,,0,0,,2005-03-28 08:00,2005-05-13 00:00,2007-06-07 08:01,2007-06-07 08:01,,2007-01-27 00:00,2007-01-27 00:00,,,2005-03-28 08:00,2005-06-06 17:00,,,,,PT_Normal,,,,,tDurKCiVT5qEpxK8Hb7Q7w,,,,N,0,0,,,2007-02-01 02:43,2007-02-04 01:05,hbe4678,hbe4678,,,0
3566,12459747,14517,6816183,13330,1,100,N,N,N,CP_Units,TT_Task,DT_FixedDUR2,RV_OK,TK_Complete,EK000MB21D,Technical Evaluation  - MB212,,,,0,0,0,0,80,0,0,0,,2005-09-28 08:00,2005-12-02 00:00,2007-07-02 08:01,2007-07-02 08:01,,2007-01-27 00:00,2007-01-27 00:00,,,2005-09-28 08:00,2005-10-11 17:00,,,,,PT_Normal,,,,,mZwosnBnS2eHfDMd1Q0myQ,,,,N,0,0,,,2007-02-01 02:43,2007-02-04 01:05,hbe4678,hbe4678,,,0
3567,12459748,14517,6816183,13330,1,100,N,N,N,CP_Units,TT_Task,DT_FixedDUR2,RV_OK,TK_Complete,EK000MB21F,Prepare & Issue Purchase ERW - MB212,,,,0,0,0,0,80,0,0,0,,2005-07-18 00:00,2005-07-26 00:00,2007-07-02 08:01,2007-07-02 08:01,,2007-01-27 00:00,2007-01-27 00:00,,,2005-08-10 08:00,2005-08-23 17:00,,,,,PT_Normal,,,,,GDwuYYM/Q+m/MfW1sBaPKA,,,,N,0,0,,,2007-02-01 02:43,2007-02-04 01:05,hbe4678,hbe4678,,,0
3568,12459749,14517,6816183,13330,1,100,N,N,N,CP_Units,TT_Task,DT_FixedDUR2,RV_OK,TK_Complete,EK000MB005,Develop & Issue Furnance Job Plan,,,,0,,0,,120,,,0,,2005-03-14 08:00,2005-04-15 17:00,2009-02-15 08:01,2009-02-15 08:01,,2007-01-27 00:00,2007-01-27 00:00,,,2005-03-14 08:00,2005-04-01 17:00,,,,,PT_Normal,,,,,1JRs3RAJT4OkyviKHIaFog,,,,N,,,,,2007-02-01 02:43,2007-02-04 01:05,hbe4678,hbe4678,,,0
3569,12459750,14517,6816183,13330,1,100,N,N,N,CP_Units,TT_Task,DT_FixedDUR2,RV_OK,TK_Complete,EK000MB51F,Prepare & Issue Purchase ERW - MB511,,,,0,0,0,0,80,0,0,0,,2005-04-22 08:00,2005-05-18 00:00,2007-11-09 08:00,2007-11-09 08:00,,2007-01-27 00:00,2007-01-27 00:00,,,2005-04-22 08:00,2005-05-05 17:00,,,,,PT_Normal,,,,,/bl526iPTjuIizpXCfI+Lw,,,,N,0,0,,,2007-02-01 02:43,2007-02-04 01:05,hbe4678,hbe4678,,,0
3570,12459751,14517,6816183,13330,1,100,N,N,N,CP_Units,TT_Task,DT_FixedDUR2,RV_OK,TK_Complete,EK020PR20D,PR201 KAAP Catalyst - Technical Evaluation,,,,0,0,0,0,80,0,0,0,,2005-10-18 00:00,2005-12-02 00:00,2007-03-06 08:01,2007-03-06 08:01,,2007-01-27 00:00,2007-01-27 00:00,,,2005-09-28 08:00,2005-10-11 17:00,,,,,PT_Normal,,,,,4KzJ6Le3SXirhrhWxqbEmg,0cO+LnFJskiWysHyb9c2DB,,,N,0,0,,,2007-02-01 02:43,2007-02-04 01:05,hbe4678,hbe4678,,,0
3571,12459752,14517,6816183,13330,1,100,N,N,N,CP_Units,TT_Task,DT_FixedDUR2,RV_OK,TK_Complete,EK000MB095,101-B Ducting Detail Drawings - IFF,,,,0,0,0,0,400,0,0,0,,2005-10-03 00:00,2006-05-05 17:00,2007-09-19 08:01,2007-09-19 08:01,,2007-01-27 00:00,2007-01-27 00:00,,,2005-11-28 08:00,2006-02-07 17:00,,,,,PT_Normal,,,,,fc0yo+OARumHeZV+/Jnfbg,,,,N,0,0,,,2007-02-01 02:43,2007-02-04 01:05,hbe4678,hbe4678,,,0
3572,12459753,14517,6816183,13330,1,100,N,N,N,CP_Units,TT_Task,DT_FixedDUR2,RV_OK,TK_Complete,EK000MB64F,Prepare & Issue Purchase ERW - MB640,,,,0,0,0,0,40,0,0,0,,2005-08-01 08:00,2005-08-11 00:00,2007-02-07 08:01,2007-02-07 08:01,,2007-01-27 00:00,2007-01-27 00:00,,,2005-08-01 08:00,2005-08-05 17:00,,,,,PT_Normal,,,,,gK+CiBVoTuy0GYvy8LmRHw,,,,N,0,0,,,2007-02-01 02:43,2007-02-04 01:05,hbe4678,hbe4678,,,0
3573,12459754,14517,6816183,13330,1,100,N,N,N,CP_Units,TT_Task,DT_FixedDUR2,RV_OK,TK_Complete,EK000MB65D,Technical Evaluation  - MB622,,,,0,0,0,0,40,0,0,0,,2005-08-19 00:00,2005-09-01 17:00,2007-06-07 08:01,2007-06-07 08:01,,2007-01-27 00:00,2007-01-27 00:00,,,2005-08-24 08:00,2005-08-30 17:00,,,,,PT_Normal,,,,,TNV7UKBgQ3icv3PrX5n//w,,,,N,0,0,,,2007-02-01 02:43,2007-02-04 01:05,hbe4678,hbe4678,,,0
3574,12459755,14517,6816183,13330,1,100,N,N,N,CP_Units,TT_Task,DT_FixedDUR2,RV_OK,TK_Complete,EK000MB65F,Develop & Issue Purchase ERW - MB622,,,,0,0,0,0,80,0,0,0,,2005-07-06 08:00,2005-07-18 00:00,2007-06-07 08:01,2007-06-07 08:01,,2007-01-27 00:00,2007-01-27 00:00,,,2005-07-06 08:00,2005-07-19 17:00,,,,,PT_Normal,,,,,wT51RJDATVCgMQoxajaEIg,,,,N,0,0,,,2007-02-01 02:43,2007-02-04 01:05,hbe4678,hbe4678,,,0
3575,12459756,14517,6816183,13330,1,100,N,N,N,CP_Units,TT_Task,DT_FixedDUR2,RV_OK,TK_Complete,EK000MB66D,Technical Evaluation  - MB660,,,,0,0,0,0,40,0,0,0,,2005-08-29 08:00,2005-09-12 17:00,2008-03-29 08:01,2008-03-29 08:01,,2007-01-27 00:00,2007-01-27 00:00,,,2005-08-29 08:00,2005-09-02 17:00,,,,,PT_Normal,,,,,4Y/9mhYpQ7OmrxPxsnkliw,,,,N,0,0,,,2007-02-01 02:43,2007-02-04 01:05,hbe4678,hbe4678,,,0
3576,12459757,14517,6816183,13330,1,100,N,N,N,CP_Units,TT_Task,DT_FixedDUR2,RV_OK,TK_Complete,EK000MB66F,Prepare & IssuePurchase ERW - MB660,,,,0,0,0,0,80,0,0,0,,2005-07-11 00:00,2005-07-22 00:00,2008-03-29 08:01,2008-03-29 08:01,,2007-01-27 00:00,2007-01-27 00:00,,,2005-06-27 08:00,2005-07-12 17:00,,,,,PT_Normal,,,,,J/6AgmqGRj6mWq91Xd4+8A,,,,N,0,0,,,2007-02-01 02:43,2007-02-04 01:05,hbe4678,hbe4678,,,0
3577,12459758,14517,6816183,13330,1,100,N,N,N,CP_Units,TT_Task,DT_FixedDUR2,RV_OK,TK_Complete,EK000MB68D,Technical Evaluation  - MB692,,,,0,0,0,0,40,0,0,0,,2005-08-29 00:00,2005-09-30 00:00,2008-04-12 08:01,2008-04-12 08:01,,2007-01-27 00:00,2007-01-27 00:00,,,2005-08-31 08:00,2005-09-06 17:00,,,,,PT_Normal,,,,,lvZluAPyQ9WoVZldINnOIw,,,,N,0,0,,,2007-02-01 02:43,2007-02-04 01:05,hbe4678,hbe4678,,,0
3578,12459759,14517,6816183,13330,1,100,N,N,N,CP_Units,TT_Task,DT_FixedDUR2,RV_OK,TK_Complete,EK000MB68F,Prepare & Issue Purchase ERW - MB692,,,,0,0,0,0,80,0,0,0,,2005-07-13 08:00,2005-07-27 00:00,2007-07-02 08:01,2007-07-02 08:01,,2007-01-27 00:00,2007-01-27 00:00,,,2005-07-13 08:00,2005-07-26 17:00,,,,,PT_Normal,,,,,s+jmuJbXSXGgz6WqwR6dsw,,,,N,0,0,,,2007-02-01 02:43,2007-02-04 01:05,hbe4678,hbe4678,,,0
3579,12459760,14517,6816183,13330,1,100,N,N,N,CP_Units,TT_Task,DT_FixedDUR2,RV_OK,TK_Complete,EK000MB69D,Technical Evaluation  - MB691,,,,0,0,0,0,40,0,0,0,,2005-08-22 00:00,2005-09-06 17:00,2007-06-07 08:01,2007-06-07 08:01,,2007-01-27 00:00,2007-01-27 00:00,,,2005-08-16 08:00,2005-08-22 17:00,,,,,PT_Normal,,,,,J7gAB5b7T5CMTVWrc4UmTw,,,,N,0,0,,,2007-02-01 02:43,2007-02-04 01:05,hbe4678,hbe4678,,,0
3580,12459761,14517,6816183,13330,1,100,N,N,N,CP_Units,TT_Task,DT_FixedDUR2,RV_OK,TK_Complete,EK000MB69F,Prepare & IssuePurchase ERW - MB691,,,,0,0,0,0,80,0,0,0,,2005-07-04 00:00,2005-07-18 00:00,2007-06-07 08:01,2007-06-07 08:01,,2007-01-27 00:00,2007-01-27 00:00,,,2005-06-27 08:00,2005-07-12 17:00,,,,,PT_Normal,,,,,NoYMSOM9TNi0MBKVzZEXZg,,,,N,0,0,,,2007-02-01 02:43,2007-02-04 01:05,hbe4678,hbe4678,,,0
3581,12459762,14517,6816183,13330,1,100,N,N,N,CP_Units,TT_Task,DT_FixedDUR2,RV_OK,TK_Complete,EK000MB33D,MB333 - Technical Evaluation 101-B,,,,0,0,0,0,40,0,0,0,,2005-06-27 08:00,2005-08-01 00:00,2007-07-02 08:01,2007-07-02 08:01,,2007-01-27 00:00,2007-01-27 00:00,,,2005-06-27 08:00,2005-07-05 17:00,,,,,PT_Normal,,,,,joVMwfkTSuqq7XiHoXQNig,,,,N,0,0,,,2007-02-01 02:43,2007-02-04 01:05,hbe4678,hbe4678,,,0
3582,12459763,14517,6816183,13330,1,100,N,N,N,CP_Units,TT_Task,DT_FixedDUR2,RV_OK,TK_Complete,EK000MB33F,MB333 - Develop & Issue Purchase ERW 101-B,,,,0,0,0,0,160,0,0,0,,2005-05-06 08:00,2005-05-24 00:00,2007-07-02 08:01,2007-07-02 08:01,,2007-01-27 00:00,2007-01-27 00:00,,,2005-05-20 08:00,2005-06-17 17:00,,,,,PT_Normal,,,,,rdYEcpMIScir2p+8hGSp2A,,,,N,0,0,,,2007-02-01 02:43,2007-02-04 01:05,hbe4678,hbe4678,,,0
3583,12459764,14517,6816183,13330,1,100,N,N,N,CP_Units,TT_Task,DT_FixedDUR2,RV_OK,TK_Complete,EK000MB34D,Technical Evaluation  - MB340,,,,0,0,0,0,88,0,0,0,,2005-08-29 08:00,2005-09-13 00:00,2007-10-27 08:01,2007-10-27 08:01,,2007-01-27 00:00,2007-01-27 00:00,,,2005-09-26 08:00,2005-10-10 17:00,,,,,PT_Normal,,,,,wf5A1sYETs6R+G91/FSMxw,,,,N,0,0,,,2007-02-01 02:43,2007-02-04 01:05,hbe4678,hbe4678,,,0
3584,12459765,14517,6816183,13330,1,100,N,N,N,CP_Units,TT_Task,DT_FixedDUR2,RV_OK,TK_Complete,EK000MB34F,Prepare & Issue Purchase ERW - MB340,,,,0,0,0,0,80,0,0,0,,2005-07-20 08:00,2005-07-22 00:00,2007-10-27 08:01,2007-10-27 08:01,,2007-01-27 00:00,2007-01-27 00:00,,,2005-07-20 08:00,2005-08-02 17:00,,,,,PT_Normal,,,,,7W077A9kQceLomHWJ9r+Ig,,,,N,0,0,,,2007-02-01 02:43,2007-02-04 01:05,hbe4678,hbe4678,,,0
3585,12459766,14517,6816183,13330,1,100,N,N,N,CP_Units,TT_Task,DT_FixedDUR2,RV_OK,TK_Complete,EK000MB41C,Prepare & Issue Prelim. RFQ - MB410 to Proc.,,,,0,,0,,24,,,0,,2005-03-28 08:00,2005-03-29 17:00,2007-10-27 08:01,2007-10-27 08:01,,2007-01-27 00:00,2007-01-27 00:00,,,2005-03-28 08:00,2005-03-30 17:00,,,,,PT_Normal,,,,,8+Ne/swhTXyZgeyMmGKoVA,,,,N,,,,,2007-02-01 02:43,2007-02-04 01:05,hbe4678,hbe4678,,,0
3586,12459767,14517,6816183,13330,1,100,N,N,N,CP_Units,TT_Task,DT_FixedDUR2,RV_OK,TK_Complete,EK000MB41D,Technical Evaluation  - MB410,,,,0,0,0,0,40,0,0,0,,2005-05-10 08:00,2005-05-31 17:00,2007-10-27 08:01,2007-10-27 08:01,,2007-01-27 00:00,2007-01-27 00:00,,,2005-05-23 08:00,2005-05-27 17:00,,,,,PT_Normal,,,,,JbnZpbSeQseer4e8JkIwcA,,,,N,0,0,,,2007-02-01 02:43,2007-02-04 01:05,hbe4678,hbe4678,,,0
3587,12459768,14517,6816183,13330,1,100,N,N,N,CP_Units,TT_Task,DT_FixedDUR2,RV_OK,TK_Complete,EK000MB41E,Prepare & Issue Purchase ERW - MB410,,,,0,0,0,0,272,0,0,0,,2005-06-03 08:00,2005-06-20 00:00,2007-10-27 08:01,2007-10-27 08:01,,2007-01-27 00:00,2007-01-27 00:00,,,2005-06-03 08:00,2005-07-22 17:00,,,,,PT_Normal,,,,,/NGT24IaQ7+QQXH3iUfdaQ,,,,N,0,0,,,2007-02-01 02:43,2007-02-04 01:05,hbe4678,hbe4678,,,0
3588,12459769,14517,6816183,13330,1,100,N,N,N,CP_Units,TT_Task,DT_FixedDUR2,RV_OK,TK_Complete,EK000MB42D,Technical Evaluation  - MB420,,,,0,0,0,0,80,0,0,0,,2005-11-15 08:00,2005-11-30 00:00,2008-04-05 08:01,2008-04-05 08:01,,2007-01-27 00:00,2007-01-27 00:00,,,2005-11-15 08:00,2005-11-28 17:00,,,,,PT_Normal,,,,,l15I5KkaRaeAQfD/jE6feA,,,,N,0,0,,,2007-02-01 02:43,2007-02-04 01:05,hbe4678,hbe4678,,,0
3589,12459770,14517,6816183,13330,1,100,N,N,N,CP_Units,TT_Task,DT_FixedDUR2,RV_OK,TK_Complete,EK000MB42F,Prepare & Issue Purchase ERW - MB420,,,,0,0,0,0,80,0,0,0,,2005-07-18 00:00,2005-07-27 00:00,2007-07-02 08:01,2007-07-02 08:01,,2007-01-27 00:00,2007-01-27 00:00,,,2005-07-27 08:00,2005-08-09 17:00,,,,,PT_Normal,,,,,gJhvDPlzRoSh4LvI/8uP4A,,,,N,0,0,,,2007-02-01 02:43,2007-02-04 01:05,hbe4678,hbe4678,,,0
3590,12459771,14517,6816183,13330,1,100,N,N,N,CP_Units,TT_Task,DT_FixedDUR2,RV_OK,TK_Complete,EK000MB51C,Prepare & Issue Prelim. RFQ - MB511 to Proc.,,,,0,,0,,24,,,0,,2005-04-04 08:00,2005-04-06 17:00,2007-11-09 08:00,2007-11-09 08:00,,2007-01-27 00:00,2007-01-27 00:00,,,2005-04-04 08:00,2005-04-06 17:00,,,,,PT_Normal,,,,,wBkrZKKERdSsanJlmJ2/sQ,,,,N,,,,,2007-02-01 02:43,2007-02-04 01:05,hbe4678,hbe4678,,,0
3591,12459772,14517,6816183,13330,1,100,N,N,N,CP_Units,TT_Task,DT_FixedDUR2,RV_OK,TK_Complete,EK000MB51D,Technical Evaluation  - MB511,,,,0,0,0,0,40,0,0,0,,2005-05-03 00:00,2005-05-17 00:00,2007-11-09 08:00,2007-11-09 08:00,,2007-01-27 00:00,2007-01-27 00:00,,,2005-05-06 08:00,2005-05-12 17:00,,,,,PT_Normal,,,,,4EBpTHIfSHSltiflb0+VOg,,,,N,0,0,,,2007-02-01 02:43,2007-02-04 01:05,hbe4678,hbe4678,,,0
3592,12459773,14517,6816183,13330,1,100,N,N,N,CP_Units,TT_Task,DT_FixedDUR2,RV_OK,TK_Complete,EK000MB61C,Prepare & Issue Prelim. RFQ - MB610 to Proc.,,,,0,,0,,24,,,0,,2005-03-23 08:00,2005-03-25 17:00,2007-09-19 08:01,2007-09-19 08:01,,2007-01-27 00:00,2007-01-27 00:00,,,2005-03-23 08:00,2005-03-25 17:00,,,,,PT_Normal,,,,,yYVaulPwQG+q3rD4loh9Zw,,,,N,,,,,2007-02-01 02:43,2007-02-04 01:05,hbe4678,hbe4678,,,0
3593,12459774,14517,6816183,13330,1,100,N,N,N,CP_Units,TT_Task,DT_FixedDUR2,RV_OK,TK_Complete,EK000MB64D,Technical Evaluation  - MB640,,,,0,0,0,0,80,0,0,0,,2005-09-09 00:00,2005-11-17 00:00,2007-02-07 08:01,2007-02-07 08:01,,2007-01-27 00:00,2007-01-27 00:00,,,2005-10-10 08:00,2005-10-21 17:00,,,,,PT_Normal,,,,,qcU2N2a1TL+TlJ80mmG4Vg,,,,N,0,0,,,2007-02-01 02:43,2007-02-04 01:05,hbe4678,hbe4678,,,0
3594,12459775,14517,6816183,13330,1,100,N,N,N,CP_Units,TT_Task,DT_FixedDUR2,RV_OK,TK_Complete,EK000MB61D,Technical Evaluation  - MB610,,,,0,,0,,40,,,0,,2005-04-13 08:00,2005-04-19 17:00,2007-09-19 08:01,2007-09-19 08:01,,2007-01-27 00:00,2007-01-27 00:00,,,2005-04-13 08:00,2005-04-19 17:00,,,,,PT_Normal,,,,,DR6PlF4NQNODU5UCkRowGw,,,,N,,,,,2007-02-01 02:43,2007-02-04 01:05,hbe4678,hbe4678,,,0
3595,12459776,14517,6816183,13330,1,100,N,N,N,CP_Units,TT_Task,DT_FixedDUR2,RV_OK,TK_Complete,EK000MBG10,General & Administrative,,,,0,0,0,0,2544,0,0,0,,2005-06-27 08:00,2006-09-30 00:00,2009-02-15 08:01,2009-02-15 08:01,,2007-01-27 00:00,2007-01-27 00:00,,,2005-06-27 08:00,2006-09-19 17:00,,,,,PT_Normal,,,,,bsZ4ZzBoSvCUc0eDKWxorQ,,,,N,0,0,,,2007-02-01 02:43,2007-02-04 01:05,hbe4678,hbe4678,,,0
3596,12459777,14517,6816183,13330,1,100,N,N,N,CP_Units,TT_Task,DT_FixedDUR2,RV_OK,TK_Complete,EK000MBP1C,101-B Prepare & Issue Prelim. Shop Fab to Proc.,,,,0,,0,,24,,,0,,2005-03-18 08:00,2005-03-22 17:00,2007-06-07 08:01,2007-06-07 08:01,,2007-01-27 00:00,2007-01-27 00:00,,,2005-03-18 08:00,2005-03-22 17:00,,,,,PT_Normal,,,,,4v85zakLTO2+LF0St98Fmg,,,,N,,,,,2007-02-01 02:43,2007-02-04 01:05,hbe4678,hbe4678,,,0
3597,12459778,14517,6816183,13330,1,100,N,N,N,CP_Units,TT_Task,DT_FixedDUR2,RV_OK,TK_Complete,EK000MBP1D,101-B Technical Bid Evaluation Shop Fab,,,,0,,0,,40,,,0,,2005-04-05 08:00,2005-04-08 17:00,2007-06-07 08:01,2007-06-07 08:01,,2007-01-27 00:00,2007-01-27 00:00,,,2005-04-05 08:00,2005-04-11 17:00,,,,,PT_Normal,,,,,LcYWti6hSeKYm6euNBUtfw,,,,N,,,,,2007-02-01 02:43,2007-02-04 01:05,hbe4678,hbe4678,,,0
3598,12459779,14517,6816183,13330,1,100,N,N,N,CP_Units,TT_Task,DT_FixedDUR2,RV_OK,TK_Complete,EK000MBP1E,Prepare & Issue Purchase ERW 101-B Shop Fab,,,,0,0,0,0,24,0,0,0,,2005-05-27 08:00,2005-06-10 00:00,2007-06-07 08:01,2007-06-07 08:01,,2007-01-27 00:00,2007-01-27 00:00,,,2005-05-27 08:00,2005-06-01 17:00,,,,,PT_Normal,,,,,K2GQwiErTNGDlsE0PGWbuA,,,,N,0,0,,,2007-02-01 02:43,2007-02-04 01:05,hbe4678,hbe4678,,,0
3599,12459780,14517,6816183,13330,1,100,N,N,N,CP_Units,TT_Task,DT_FixedDUR2,RV_OK,TK_Complete,EK000MBP3C,Prepare & Issue Prelim. RFQ Pressure Parts,,,,0,,0,,48,,,0,,2005-03-28 08:00,2005-04-04 17:00,2007-10-27 08:01,2007-10-27 08:01,,2007-01-27 00:00,2007-01-27 00:00,,,2005-03-28 08:00,2005-04-04 17:00,,,,,PT_Normal,,,,,SijiQ+bZSneH4llcbHD+uw,,,,N,,,,,2007-02-01 02:43,2007-02-04 01:05,hbe4678,hbe4678,,,0
3600,12459781,14517,6816183,13330,1,100,N,N,N,CP_Units,TT_Task,DT_FixedDUR2,RV_OK,TK_Complete,EK000MBP3D,Technical Evaluation - 101-B Pressure Parts,,,,0,0,0,0,40,0,0,0,,2005-05-17 00:00,2005-06-10 00:00,2007-10-27 08:01,2007-10-27 08:01,,2007-01-27 00:00,2007-01-27 00:00,,,2005-05-23 08:00,2005-05-27 17:00,,,,,PT_Normal,,,,,iE6IWvq9TqSxL5KKk3I4Jg,,,,N,0,0,,,2007-02-01 02:43,2007-02-04 01:05,hbe4678,hbe4678,,,0
3601,12459782,14517,6816183,13330,1,100,N,N,N,CP_Units,TT_Task,DT_FixedDUR2,RV_OK,TK_Complete,EK000MBP3E,Prepare & Issue Purchase ERW 101-B Pressure Part,,,,0,0,0,0,40,0,0,0,,2005-06-13 00:00,2005-06-16 00:00,2007-10-27 08:01,2007-10-27 08:01,,2007-01-27 00:00,2007-01-27 00:00,,,2005-06-20 08:00,2005-06-24 17:00,,,,,PT_Normal,,,,,M7I7WCZJRZuBydzuwj7mVw,,,,N,0,0,,,2007-02-01 02:43,2007-02-04 01:05,hbe4678,hbe4678,,,0
3602,12459783,14517,6816183,13330,1,100,N,N,N,CP_Units,TT_Task,DT_FixedDUR2,RV_OK,TK_Complete,EK000MBP4C,Prepare & Issue Prelim. RFQ Cast Material,,,,0,,0,,24,,,0,,2005-03-28 08:00,2005-03-30 17:00,2007-11-05 08:01,2007-11-05 08:01,,2007-01-27 00:00,2007-01-27 00:00,,,2005-03-28 08:00,2005-03-30 17:00,,,,,PT_Normal,,,,,E0MjTS29RvOg4iKLGYSqTA,,,,N,,,,,2007-02-01 02:43,2007-02-04 01:05,hbe4678,hbe4678,,,0
3603,12459784,14517,6816183,13330,1,100,N,N,N,CP_Units,TT_Task,DT_FixedDUR2,RV_OK,TK_Complete,EK000MBP4D,Technical Evaluation - 101-B Cast Material,,,,0,0,0,0,40,0,0,0,,2005-05-06 08:00,2005-05-31 17:00,2007-11-05 08:01,2007-11-05 08:01,,2007-01-27 00:00,2007-01-27 00:00,,,2005-05-20 08:00,2005-05-26 17:00,,,,,PT_Normal,,,,,7OWRWLYjRRKA/0FWM2aLpA,,,,N,0,0,,,2007-02-01 02:43,2007-02-04 01:05,hbe4678,hbe4678,,,0
3604,12459785,14517,6816183,13330,1,100,N,N,N,CP_Units,TT_Task,DT_FixedDUR2,RV_OK,TK_Complete,EK000MBP4E,Prepare & Issue Purchase ERW 101-B Cast Material,,,,0,0,0,0,80,0,0,0,,2005-06-03 08:00,2005-06-16 17:00,2007-11-05 08:01,2007-11-05 08:01,,2007-01-27 00:00,2007-01-27 00:00,,,2005-06-03 08:00,2005-06-16 17:00,,,,,PT_Normal,,,,,Y1uYD11dSDOz2Dex7Ac5LA,,,,N,0,0,,,2007-02-01 02:43,2007-02-04 01:05,hbe4678,hbe4678,,,0
3605,12459786,14517,6816183,13330,1,100,N,N,N,CP_Units,TT_Task,DT_FixedDUR2,RV_OK,TK_Complete,EK000MB62F,Prepare & Issue Purchase ERW - MB621,,,,0,0,0,0,80,0,0,0,,2005-06-13 08:00,2005-07-06 00:00,2007-03-07 08:01,2007-03-07 08:01,,2007-01-27 00:00,2007-01-27 00:00,,,2005-06-13 08:00,2005-06-24 17:00,,,,,PT_Normal,,,,,TvIl0M0MSq+UUQ3D/fqs7Q,,,,N,0,0,,,2007-02-01 02:43,2007-02-04 01:05,hbe4678,hbe4678,,,0
3606,12459787,14517,6816183,13330,1,100,N,N,N,CP_Units,TT_Task,DT_FixedDUR2,RV_OK,TK_Complete,EK000MB63C,Prepare & Issue Prelim. RFQ - MB630 to Proc.,,,,0,,0,,24,,,0,,2005-03-28 08:00,2005-03-30 17:00,2007-02-07 08:01,2007-02-07 08:01,,2007-01-27 00:00,2007-01-27 00:00,,,2005-03-28 08:00,2005-03-30 17:00,,,,,PT_Normal,,,,,FSjfgjzVSHiQ2zFN5V/1uQ,,,,N,,,,,2007-02-01 02:43,2007-02-04 01:05,hbe4678,hbe4678,,,0
3607,12459788,14517,6816183,13330,1,100,N,N,N,CP_Units,TT_Task,DT_FixedDUR2,RV_OK,TK_Complete,EK000MB63D,Technical Evaluation  - MB630,,,,0,0,0,0,40,0,0,0,,2005-04-29 08:00,2005-07-25 00:00,2007-06-07 08:01,2007-06-07 08:01,,2007-01-27 00:00,2007-01-27 00:00,,,2005-04-29 08:00,2005-05-05 17:00,,,,,PT_Normal,,,,,5fk9mwnhQwWQZ3FJ8R9uSQ,,,,N,0,0,,,2007-02-01 02:43,2007-02-04 01:05,hbe4678,hbe4678,,,0
3608,12459789,14517,6816183,13330,1,100,N,N,N,CP_Units,TT_Task,DT_FixedDUR2,RV_OK,TK_Complete,EK000MB63F,Prepare & Issue Purchase ERW - MB630,,,,0,0,0,0,80,0,0,0,,2005-05-27 08:00,2005-06-29 00:00,2007-02-07 08:01,2007-02-07 08:01,,2007-01-27 00:00,2007-01-27 00:00,,,2005-05-27 08:00,2005-06-10 17:00,,,,,PT_Normal,,,,,PHNkXHQEQ4+Soc3rY9xlUA,,,,N,0,0,,,2007-02-01 02:43,2007-02-04 01:05,hbe4678,hbe4678,,,0
3609,12459790,14517,6816184,13330,1,100,N,N,N,CP_Units,TT_Task,DT_FixedDUR2,RV_OK,TK_Complete,EK000MC21E,Prepare & Issue Purchase ERW - MC210,,,,0,0,0,0,80,0,0,0,,2005-10-31 00:00,2005-12-08 00:00,2007-07-02 08:01,2007-07-02 08:01,,2007-01-27 00:00,2007-01-27 00:00,,,2005-11-07 08:00,2005-11-18 17:00,,,,,PT_Normal,,,,,qhuDtiAnTnGoFuiWff8gow,,,,N,0,0,,,2007-02-01 02:43,2007-02-04 01:05,hbe4678,hbe4678,,,0
3610,12459791,14517,6816184,13330,1,100,N,N,N,CP_Units,TT_Task,DT_FixedDUR2,RV_OK,TK_Complete,EK000MC21F,Finalize Equip. Data Sheets for ERW - MC210,,,,0,0,0,,80,,0,0,,2005-04-11 08:00,2005-07-14 00:00,2006-12-25 08:00,2006-12-25 08:00,,2007-01-27 00:00,2007-01-27 00:00,,,2005-04-11 08:00,2005-04-22 17:00,,,,,PT_Normal,,,,,idFxqqkDQn6tfUTIB1DgYg,,,,N,0,0,,,2007-02-01 02:43,2007-02-04 01:05,hbe4678,hbe4678,,,0
3611,12459792,14517,6816184,13330,1,100,N,N,N,CP_Units,TT_Task,DT_FixedDUR2,RV_OK,TK_Complete,EK000MC23B,Develop & Issue Design Data for ERW - MC230,,,,0,0,0,0,40,0,0,0,,2005-05-09 08:00,2005-05-13 17:00,2006-12-25 08:00,2006-12-25 08:00,,2007-01-27 00:00,2007-01-27 00:00,,,2005-05-09 08:00,2005-05-13 17:00,,,,,PT_Normal,,,,,c7sd7rAMSzqxHb/UhL60jQ,,,,N,0,0,,,2007-02-01 02:43,2007-02-04 01:05,hbe4678,hbe4678,,,0
3612,12459793,14517,6816184,13330,1,100,N,N,N,CP_Units,TT_Task,DT_FixedDUR2,RV_OK,TK_Complete,EK000MC23C,Prepare & Issue Prelim. RFQ - MC230 to Proc.,,,,0,,0,,8,,,0,,2005-03-28 08:00,2005-03-29 17:00,2007-01-09 08:01,2007-01-09 08:01,,2007-01-27 00:00,2007-01-27 00:00,,,2005-03-28 08:00,2005-03-28 17:00,,,,,PT_Normal,,,,,/hGgieebQXCONCT1G8DWcw,,,,N,,,,,2007-02-01 02:43,2007-02-04 01:05,hbe4678,hbe4678,,,0
3613,12459794,14517,6816184,13330,1,100,N,N,N,CP_Units,TT_Task,DT_FixedDUR2,RV_OK,TK_Complete,PK000MC61N,Recv. Planning V. Data MC610,,,,0,0,0,0,160,0,0,0,,2005-10-11 00:00,2006-01-03 00:00,2007-05-07 08:00,2007-05-07 08:00,,2007-01-27 00:00,2007-01-27 00:00,,,2005-10-17 08:00,2005-11-11 17:00,,,,,PT_Normal,,,,,/Pv4V/DLQk+jlYYMF/SBgQ,,,,N,0,0,,,2007-02-01 02:43,2007-02-04 01:05,hbe4678,hbe4678,,,0
3614,12459795,14517,6816184,13330,1,100,N,N,N,CP_Units,TT_Task,DT_FixedDUR2,RV_OK,TK_Complete,EK000MC21P,Develop & Issue Setting Plans for ERW - MC210,,,,0,0,0,0,80,0,0,0,,2005-05-16 00:00,2005-07-21 00:00,2006-12-25 08:00,2006-12-25 08:00,,2007-01-27 00:00,2007-01-27 00:00,,,2005-05-20 08:00,2005-06-03 17:00,,,,,PT_Normal,,,,,HbjWnGz4SmG2KHCYavvk9A,,,,N,0,0,,,2007-02-01 02:43,2007-02-04 01:05,hbe4678,hbe4678,,,0
3615,12459796,14517,6816184,13330,1,100,N,N,N,CP_Units,TT_Task,DT_FixedDUR2,RV_OK,TK_Complete,PK020MC31F,"MC312 - (120,121-C) - Planning V. Data (Setting Plans)",,,,0,0,0,0,160,0,0,0,,2005-10-24 00:00,2005-11-08 00:00,2007-05-07 08:00,2007-05-07 08:00,,2007-01-27 00:00,2007-01-27 00:00,,,2005-11-04 08:00,2005-12-01 17:00,,,,,PT_Normal,,,,,hSl15utUQHW/Djg3B/KgHw,o1NsWa8ld0WvxCHMMIyHDR,,,N,0,0,,,2007-02-01 02:43,2007-02-04 01:05,hbe4678,hbe4678,,,0
3616,12459797,14517,6816184,13330,1,100,N,N,N,CP_Units,TT_Task,DT_FixedDUR2,RV_OK,TK_Complete,EK020MC31A,"MC312 - (120,121-C) - Issue Prelim. RFQ",,,,0,,0,,8,,,0,,2005-03-21 08:00,2005-03-21 17:00,2007-05-07 08:00,2007-05-07 08:00,,2007-01-27 00:00,2007-01-27 00:00,,,2005-03-21 08:00,2005-03-21 17:00,,,,,PT_Normal,,,,,pRSZW7c4T/uznHYXtuE2Mw,FONWDRL1REGLY+Wb8KTY+R,,,N,,,,,2007-02-01 02:43,2007-02-04 01:05,hbe4678,hbe4678,,,0
3617,12459798,14517,6816184,13330,1,100,N,N,N,CP_Units,TT_Task,DT_FixedDUR2,RV_OK,TK_Complete,EK020MC31D,"MC312 - (120,121-C) - Technical Evaluation",,,,0,0,0,0,40,0,0,0,,2005-06-06 08:00,2005-06-24 00:00,2007-05-07 08:00,2007-05-07 08:00,,2007-01-27 00:00,2007-01-27 00:00,,,2005-06-06 08:00,2005-06-10 17:00,,,,,PT_Normal,,,,,5clH/ywjSS+sxf8G2V/AsA,2oPuJSD4nkOAe3p9VsI1YB,,,N,0,0,,,2007-02-01 02:43,2007-02-04 01:05,hbe4678,hbe4678,,,0
3618,12459799,14517,6816184,13330,1,100,N,N,N,CP_Units,TT_Task,DT_FixedDUR2,RV_OK,TK_Complete,EK020MC31C,"MC312 - (120,121-C) - Prepare & Issue Purchase ERW",,,,0,0,0,0,120,0,0,0,,2005-10-24 00:00,2005-10-28 00:00,2007-08-06 08:01,2007-08-06 08:01,,2007-01-27 00:00,2007-01-27 00:00,,,2005-11-09 08:00,2005-11-29 17:00,,,,,PT_Normal,,,,,jj3VSESGSTG5Rcg0Ow7bHQ,Hxre8K9hgEG8H9j9a9gMxB,,,N,0,0,,,2007-02-01 02:43,2007-02-04 01:05,hbe4678,hbe4678,,,0
3619,12459800,14517,6816184,13330,1,100,N,N,N,CP_Units,TT_Task,DT_FixedDUR2,RV_OK,TK_Complete,EK000MC23F,Finalize Equip. Data Sheets for ERW - MC230,,,,0,0,0,0,152,0,0,0,,2005-05-23 08:00,2005-07-14 00:00,2006-12-25 08:00,2006-12-25 08:00,,2007-01-27 00:00,2007-01-27 00:00,,,2005-05-23 08:00,2005-06-17 17:00,,,,,PT_Normal,,,,,RUEAZs0nRmSnB/1HmjIB6g,,,,N,0,0,,,2007-02-01 02:43,2007-02-04 01:05,hbe4678,hbe4678,,,0
3620,12459801,14517,6816184,13330,1,100,N,N,N,CP_Units,TT_Task,DT_FixedDUR2,RV_OK,TK_Complete,EK000MC23P,Develop & Issue Setting Plans for ERW - MC230,,,,0,0,0,0,80,0,0,0,,2005-06-01 00:00,2005-07-21 17:00,2006-12-25 08:00,2006-12-25 08:00,,2007-01-27 00:00,2007-01-27 00:00,,,2005-06-20 08:00,2005-07-05 17:00,,,,,PT_Normal,,,,,/ysXJmV5T3up+Af+yZRUgQ,,,,N,0,0,,,2007-02-01 02:43,2007-02-04 01:05,hbe4678,hbe4678,,,0
3621,12459802,14517,6816184,13330,1,100,N,N,N,CP_Units,TT_Task,DT_FixedDUR2,RV_OK,TK_Complete,EK000MC31B,Develop & Issue Design Data for ERW - MC310,,,,0,,0,,40,,,0,,2005-04-01 08:00,2005-04-12 17:00,2006-12-25 08:00,2006-12-25 08:00,,2007-01-27 00:00,2007-01-27 00:00,,,2005-04-01 08:00,2005-04-07 17:00,,,,,PT_Normal,,,,,q+AM9RmKRmCDDw8weCl0rQ,,,,N,,,,,2007-02-01 02:43,2007-02-04 01:05,hbe4678,hbe4678,,,0
3622,12459803,14517,6816184,13330,1,100,N,N,N,CP_Units,TT_Task,DT_FixedDUR2,RV_OK,TK_Complete,EK000MC31C,Prepare & Issue Prelim. RFQ - MC310 to Proc.,,,,0,,0,,8,,,0,,2005-03-18 08:00,2005-03-18 17:00,2007-02-08 08:01,2007-02-08 08:01,,2007-01-27 00:00,2007-01-27 00:00,,,2005-03-18 08:00,2005-03-18 17:00,,,,,PT_Normal,,,,,p1eFlDipRASMlJKGNQyzdA,,,,N,,,,,2007-02-01 02:43,2007-02-04 01:05,hbe4678,hbe4678,,,0
3623,12459804,14517,6816184,13330,1,100,N,N,N,CP_Units,TT_Task,DT_FixedDUR2,RV_OK,TK_Complete,EK000MC31D,Technical Evaluation  - MC310,,,,0,0,0,0,40,0,0,0,,2005-06-06 08:00,2005-06-24 00:00,2007-02-08 08:01,2007-02-08 08:01,,2007-01-27 00:00,2007-01-27 00:00,,,2005-06-06 08:00,2005-06-10 17:00,,,,,PT_Normal,,,,,xpMwI3SeTRCsaWyFc3EpHA,,,,N,0,0,,,2007-02-01 02:43,2007-02-04 01:05,hbe4678,hbe4678,,,0
3624,12459805,14517,6816184,13330,1,100,N,N,N,CP_Units,TT_Task,DT_FixedDUR2,RV_OK,TK_Complete,EK000MC31E,Prepare & Issue Purchase ERW - MC310,,,,0,0,0,0,80,0,0,0,,2006-02-03 00:00,2006-03-15 00:00,2007-02-08 08:01,2007-02-08 08:01,,2007-01-27 00:00,2007-01-27 00:00,,,2006-02-20 08:00,2006-03-03 17:00,,,,,PT_Normal,,,,,O9TaCFF2T0SMUZ3IbWFJ2Q,,,,N,0,0,,,2007-02-01 02:43,2007-02-04 01:05,hbe4678,hbe4678,,,0
3625,12459806,14517,6816184,13330,1,100,N,N,N,CP_Units,TT_Task,DT_FixedDUR2,RV_OK,TK_Complete,EK000MC31F,Finalize Equip. Data Sheets for ERW - MC310,,,,0,0,0,,80,,0,0,,2005-04-01 08:00,2005-05-13 00:00,2006-12-25 08:00,2006-12-25 08:00,,2007-01-27 00:00,2007-01-27 00:00,,,2005-04-01 08:00,2005-04-14 17:00,,,,,PT_Normal,,,,,CPEB1v5JSLCzEaB8s4Bpbw,,,,N,0,0,,,2007-02-01 02:43,2007-02-04 01:05,hbe4678,hbe4678,,,0
3626,12459807,14517,6816184,13330,1,100,N,N,N,CP_Units,TT_Task,DT_FixedDUR2,RV_OK,TK_Complete,EK000MC31P,Develop & Issue Setting Plans for ERW - MC310,,,,0,0,0,0,120,0,0,0,,2005-05-16 00:00,2005-06-28 00:00,2006-12-25 08:00,2006-12-25 08:00,,2007-01-27 00:00,2007-01-27 00:00,,,2005-05-09 08:00,2005-05-27 17:00,,,,,PT_Normal,,,,,v9MTDDCxSNWPH+Ssw99dCQ,,,,N,0,0,,,2007-02-01 02:43,2007-02-04 01:05,hbe4678,hbe4678,,,0
3627,12459808,14517,6816184,13330,1,100,N,N,N,CP_Units,TT_Task,DT_FixedDUR2,RV_OK,TK_Complete,EK000MC32B,Develop & Issue Design Data for ERW - MC311,,,,0,,0,,40,,,0,,2005-04-04 08:00,2005-04-18 17:00,2006-12-25 08:00,2006-12-25 08:00,,2007-01-27 00:00,2007-01-27 00:00,,,2005-04-04 08:00,2005-04-08 17:00,,,,,PT_Normal,,,,,s2oeA1+UQOOC7O3+XXsnVw,,,,N,,,,,2007-02-01 02:43,2007-02-04 01:05,hbe4678,hbe4678,,,0
3628,12459809,14517,6816184,13330,1,100,N,N,N,CP_Units,TT_Task,DT_FixedDUR2,RV_OK,TK_Complete,EK000MC32C,Issue Prelim. RFQ - MC311,,,,0,,0,,8,,,0,,2005-03-21 08:00,2005-03-21 17:00,2007-05-15 08:02,2007-05-15 08:02,,2007-01-27 00:00,2007-01-27 00:00,,,2005-03-21 08:00,2005-03-21 17:00,,,,,PT_Normal,,,,,QEY/kv4CQ+eNugaLxtTHyg,,,,N,,,,,2007-02-01 02:43,2007-02-04 01:05,hbe4678,hbe4678,,,0
3629,12459810,14517,6816184,13330,1,100,N,N,N,CP_Units,TT_Task,DT_FixedDUR2,RV_OK,TK_Complete,EK000MC32D,Technical Evaluation  - MC311,,,,0,0,0,0,40,0,0,0,,2005-06-06 08:00,2005-06-24 00:00,2007-05-15 08:02,2007-05-15 08:02,,2007-01-27 00:00,2007-01-27 00:00,,,2005-06-06 08:00,2005-06-10 17:00,,,,,PT_Normal,,,,,TvkKsG1GRjCnOIp59OnRcg,,,,N,0,0,,,2007-02-01 02:43,2007-02-04 01:05,hbe4678,hbe4678,,,0
3630,12459811,14517,6816184,13330,1,100,N,N,N,CP_Units,TT_Task,DT_FixedDUR2,RV_OK,TK_Complete,EK000MC32E,"Prepare & Issue Purchase ERW - MC311 (103-C1/C2, 123-C1/CF1-4)",,,,0,0,0,0,120,0,0,0,,2005-11-09 08:00,2005-12-16 00:00,2007-06-04 08:02,2007-06-04 08:02,,2007-01-27 00:00,2007-01-27 00:00,,,2005-11-09 08:00,2005-11-29 17:00,,,,,PT_Normal,,,,,e1g+zkgDR5qotckWn+RqsA,,,,N,0,0,,,2007-02-01 02:43,2007-02-04 01:05,hbe4678,hbe4678,,,0
3631,12459812,14517,6816184,13330,1,100,N,N,N,CP_Units,TT_Task,DT_FixedDUR2,RV_OK,TK_Complete,EK000MC32F,Finalize Equip. Data Sheets for ERW - MC311,,,,0,0,0,,120,,0,0,,2005-04-04 08:00,2005-06-24 00:00,2006-12-25 08:00,2006-12-25 08:00,,2007-01-27 00:00,2007-01-27 00:00,,,2005-04-04 08:00,2005-04-22 17:00,,,,,PT_Normal,,,,,G3e3F1HsQy6YxIAeXKM3Cw,,,,N,0,0,,,2007-02-01 02:43,2007-02-04 01:05,hbe4678,hbe4678,,,0
3632,12459813,14517,6816184,13330,1,100,N,N,N,CP_Units,TT_Task,DT_FixedDUR2,RV_OK,TK_Complete,EK000MC32P,Develop & Issue Setting Plans for ERW - MC311,,,,0,0,0,0,120,0,0,0,,2005-06-02 00:00,2005-07-21 00:00,2006-12-25 08:00,2006-12-25 08:00,,2007-01-27 00:00,2007-01-27 00:00,,,2005-06-20 08:00,2005-07-12 17:00,,,,,PT_Normal,,,,,6UlvgQ4SRRKT0L2IM1TeYA,,,,N,0,0,,,2007-02-01 02:43,2007-02-04 01:05,hbe4678,hbe4678,,,0
3633,12459814,14517,6816184,13330,1,100,N,N,N,CP_Units,TT_Task,DT_FixedDUR2,RV_OK,TK_Complete,EK000MC61B,Develop & Issue Design Data for ERW - MC610,,,,0,0,0,0,48,0,0,0,,2005-05-04 08:00,2005-05-20 17:00,2007-05-07 08:00,2007-05-07 08:00,,2007-01-27 00:00,2007-01-27 00:00,,,2005-05-04 08:00,2005-05-11 17:00,,,,,PT_Normal,,,,,JqsKzqnJQTSe5Yi8gRgJGQ,,,,N,0,0,,,2007-02-01 02:43,2007-02-04 01:05,hbe4678,hbe4678,,,0
3634,12459815,14517,6816184,13330,1,100,N,N,N,CP_Units,TT_Task,DT_FixedDUR2,RV_OK,TK_Complete,EK000MC61C,Prepare & Issue Prelim. RFQ - MC610 to Proc.,,,,0,,0,,8,,,0,,2005-03-18 08:00,2005-03-18 17:00,2007-05-07 08:00,2007-05-07 08:00,,2007-01-27 00:00,2007-01-27 00:00,,,2005-03-18 08:00,2005-03-18 17:00,,,,,PT_Normal,,,,,X5SumH6dR4mxIqH67eflGw,,,,N,,,,,2007-02-01 02:43,2007-02-04 01:05,hbe4678,hbe4678,,,0
3635,12459816,14517,6816184,13330,1,100,N,N,N,CP_Units,TT_Task,DT_FixedDUR2,RV_OK,TK_Complete,EK000MC61D,Technical Evaluation  - MC610,,,,0,0,0,,40,,0,0,,2005-04-20 08:00,2005-05-02 00:00,2007-05-07 08:00,2007-05-07 08:00,,2007-01-27 00:00,2007-01-27 00:00,,,2005-04-20 08:00,2005-04-26 17:00,,,,,PT_Normal,,,,,lR/4u5dTQiuQveNW/OwHlw,,,,N,0,0,,,2007-02-01 02:43,2007-02-04 01:05,hbe4678,hbe4678,,,0
3636,12459817,14517,6816184,13330,1,100,N,N,N,CP_Units,TT_Task,DT_FixedDUR2,RV_OK,TK_Complete,EK000MC61E,Prepare & Issue Purchase ERW - MC610,,,,0,0,0,0,80,0,0,0,,2005-10-19 00:00,2005-10-26 00:00,2007-10-20 08:01,2007-10-20 08:01,,2007-01-27 00:00,2007-01-27 00:00,,,2005-10-31 08:00,2005-11-11 17:00,,,,,PT_Normal,,,,,x3a7qu/0QiGxHZ5/vZTYjw,,,,N,0,0,,,2007-02-01 02:43,2007-02-04 01:05,hbe4678,hbe4678,,,0
3637,12459818,14517,6816184,13330,1,100,N,N,N,CP_Units,TT_Task,DT_FixedDUR2,RV_OK,TK_Complete,EK000MC010,Develop & Issue Exchanger Work Plan,,,,0,,0,,160,,,0,,2005-03-07 08:00,2005-04-08 17:00,2007-02-27 08:00,2007-02-27 08:00,,2007-01-27 00:00,2007-01-27 00:00,,,2005-03-07 08:00,2005-04-01 17:00,,,,,PT_Normal,,,,,aq8vEVuOTJioiiLcyl/O6w,,,,N,,,,,2007-02-01 02:43,2007-02-04 01:05,hbe4678,hbe4678,,,0
3638,12459819,14517,6816184,13330,1,100,N,N,N,CP_Units,TT_Task,DT_FixedDUR2,RV_OK,TK_Complete,EK000MC210,Cooling Water Balance Review,,,,0,,0,,32,,,0,,2005-03-21 08:00,2005-03-28 17:00,2007-01-09 08:01,2007-01-09 08:01,,2007-01-27 00:00,2007-01-27 00:00,,,2005-03-21 08:00,2005-03-24 17:00,,,,,PT_Normal,,,,,Jt9XA1ajQhG7DK9l4/zpEA,,,,N,,,,,2007-02-01 02:43,2007-02-04 01:05,hbe4678,hbe4678,,,0
3639,12459820,14517,6816184,13330,1,100,N,N,N,CP_Units,TT_Task,DT_FixedDUR2,RV_OK,TK_Complete,EK000MC21B,Develop & Issue Design Data for ERW - MC210,,,,0,0,0,,136,,0,0,,2005-04-07 08:00,2005-05-02 00:00,2006-12-25 08:00,2006-12-25 08:00,,2007-01-27 00:00,2007-01-27 00:00,,,2005-04-07 08:00,2005-04-29 17:00,,,,,PT_Normal,,,,,Equg3RB9QbuWrQ9jP91Mqg,,,,N,0,0,,,2007-02-01 02:43,2007-02-04 01:05,hbe4678,hbe4678,,,0
3640,12459821,14517,6816184,13330,1,100,N,N,N,CP_Units,TT_Task,DT_FixedDUR2,RV_OK,TK_Complete,EK000MC21C,Prepare & Issue Prelim. RFQ - MC210 to Proc.,,,,0,,0,,0,,,0,,2005-03-28 08:00,2005-03-29 17:00,2007-01-09 08:01,2007-01-09 08:01,,2007-01-27 00:00,2007-01-27 00:00,,,2005-03-28 08:00,2005-03-28 08:00,,,,,PT_Normal,,,,,GQ56TU1/RAOgVyADtHiJtg,,,,N,,,,,2007-02-01 02:43,2007-02-04 01:05,hbe4678,hbe4678,,,0
3641,12459822,14517,6816184,13330,1,100,N,N,N,CP_Units,TT_Task,DT_FixedDUR2,RV_OK,TK_Complete,EK000MC21D,Technical Evaluation  - MC210,,,,0,0,0,0,40,0,0,0,,2005-05-09 00:00,2005-05-23 17:00,2007-03-20 08:01,2007-03-20 08:01,,2007-01-27 00:00,2007-01-27 00:00,,,2005-05-06 08:00,2005-05-12 17:00,,,,,PT_Normal,,,,,FxJJ+wg0SxCcZCD6HmeHjA,,,,N,0,0,,,2007-02-01 02:43,2007-02-04 01:05,hbe4678,hbe4678,,,0
3642,12459823,14517,6816184,13330,1,100,N,N,N,CP_Units,TT_Task,DT_FixedDUR2,RV_OK,TK_Complete,EK000MC61F,Finalize Equip. Data Sheets for ERW - MC610,,,,0,0,0,,40,,0,0,,2005-04-20 08:00,2005-05-10 17:00,2007-05-07 08:00,2007-05-07 08:00,,2007-01-27 00:00,2007-01-27 00:00,,,2005-04-20 08:00,2005-04-26 17:00,,,,,PT_Normal,,,,,c7yyK1pySXq1T0Nvn3M8VQ,,,,N,0,0,,,2007-02-01 02:43,2007-02-04 01:05,hbe4678,hbe4678,,,0
3643,12459824,14517,6816184,13330,1,100,N,N,N,CP_Units,TT_Task,DT_FixedDUR2,RV_OK,TK_Complete,EK000MC63B,Develop & Issue Design Data for ERW - MC630,,,,0,0,0,0,56,0,0,0,,2005-05-16 00:00,2005-05-20 17:00,2006-12-25 08:00,2006-12-25 08:00,,2007-01-27 00:00,2007-01-27 00:00,,,2005-05-09 08:00,2005-05-17 17:00,,,,,PT_Normal,,,,,Y6TTQv6RQv+MiPYSP2tvnw,,,,N,0,0,,,2007-02-01 02:43,2007-02-04 01:05,hbe4678,hbe4678,,,0
3644,12459825,14517,6816184,13330,1,100,N,N,N,CP_Units,TT_Task,DT_FixedDUR2,RV_OK,TK_Complete,EK000MC23D,Technical Evaluation  - MC230,,,,0,0,0,0,40,0,0,0,,2005-05-09 00:00,2005-05-23 17:00,2007-01-09 08:01,2007-01-09 08:01,,2007-01-27 00:00,2007-01-27 00:00,,,2005-05-06 08:00,2005-05-12 17:00,,,,,PT_Normal,,,,,ZGxr/cp7Tl+4mdVwCc8TfA,,,,N,0,0,,,2007-02-01 02:43,2007-02-04 01:05,hbe4678,hbe4678,,,0
3645,12459826,14517,6816184,13330,1,100,N,N,N,CP_Units,TT_Task,DT_FixedDUR2,RV_OK,TK_Complete,EK000MC23E,Prepare & Issue Purchase ERW - MC230,,,,0,0,0,0,80,0,0,0,,2005-10-31 00:00,2005-11-14 17:00,2007-06-13 08:01,2007-06-13 08:01,,2007-01-27 00:00,2007-01-27 00:00,,,2005-11-04 08:00,2005-11-17 17:00,,,,,PT_Normal,,,,,UBXFpaihTGyN9E9WdtN46w,,,,N,0,0,,,2007-02-01 02:43,2007-02-04 01:05,hbe4678,hbe4678,,,0
3646,12459827,14517,6816185,13330,1,100,N,N,N,CP_Units,TT_Task,DT_FixedDUR2,RV_OK,TK_Complete,EK000MD22B,Develop & Issue Design Data for ERW - MD202,,,,0,0,0,0,40,0,0,0,,2005-05-23 08:00,2005-06-01 00:00,2007-05-07 08:00,2007-05-07 08:00,,2007-01-27 00:00,2007-01-27 00:00,,,2005-05-23 08:00,2005-05-27 17:00,,,,,PT_Normal,,,,,I+Tn+p1nRS22655kztpDQQ,,,,N,0,0,,,2007-02-01 02:43,2007-02-04 01:05,hbe4678,hbe4678,,,0
3647,12459828,14517,6816185,13330,1,100,N,N,N,CP_Units,TT_Task,DT_FixedDUR2,RV_OK,TK_Complete,PK000MD51N,Recv. Planning V. Data MD501,,,,0,0,0,0,160,0,0,0,,2005-09-27 00:00,2005-12-02 00:00,2007-04-28 08:01,2007-04-28 08:01,,2007-01-27 00:00,2007-01-27 00:00,,,2005-10-17 08:00,2005-11-11 17:00,,,,,PT_Normal,,,,,nmBPVoS0SM2ZjZeijGmBVQ,,,,N,0,0,,,2007-02-01 02:43,2007-02-04 01:05,hbe4678,hbe4678,,,0
3648,12459829,14517,6816185,13330,1,100,N,N,N,CP_Units,TT_Task,DT_FixedDUR2,RV_OK,TK_Complete,PK000MD43N,Recv. Planning V. Data MD403,,,,0,0,0,0,160,0,0,0,,2005-09-09 00:00,2005-11-14 00:00,2007-04-24 08:01,2007-04-24 08:01,,2007-01-27 00:00,2007-01-27 00:00,,,2005-09-26 08:00,2005-10-21 17:00,,,,,PT_Normal,,,,,BTKu2zhqQ/Wz72GtWA9uhw,,,,N,0,0,,,2007-02-01 02:43,2007-02-04 01:05,hbe4678,hbe4678,,,0
3649,12459830,14517,6816185,13330,1,100,N,N,N,CP_Units,TT_Task,DT_FixedDUR2,RV_OK,TK_Complete,PK000MD34N,Recv. Planning V. Data MD304,,,,0,0,0,0,160,0,0,0,,2005-09-16 00:00,2005-12-13 00:00,2007-04-15 08:01,2007-04-15 08:01,,2007-01-27 00:00,2007-01-27 00:00,,,2005-09-26 08:00,2005-10-21 17:00,,,,,PT_Normal,,,,,irYMZ6c+T9SmmI/UBVjBXQ,,,,N,0,0,,,2007-02-01 02:43,2007-02-04 01:05,hbe4678,hbe4678,,,0
3650,12459831,14517,6816185,13330,1,100,N,N,N,CP_Units,TT_Task,DT_FixedDUR2,RV_OK,TK_Complete,PK000MD41N,Recv. Planning V. Data MD401,,,,0,0,0,0,160,0,0,0,,2005-09-09 00:00,2005-10-17 17:00,2007-05-26 08:01,2007-05-26 08:01,,2007-01-27 00:00,2007-01-27 00:00,,,2005-09-26 08:00,2005-10-21 17:00,,,,,PT_Normal,,,,,dfCJCg52THiVdWkiLjTpPg,,,,N,0,0,,,2007-02-01 02:43,2007-02-04 01:05,hbe4678,hbe4678,,,0
3651,12459832,14517,6816185,13330,1,100,N,N,N,CP_Units,TT_Task,DT_FixedDUR2,RV_OK,TK_Complete,PK000MD32N,Recv. Planning V. Data MD302,,,,0,0,0,0,160,0,0,0,,2005-09-16 00:00,2005-11-01 17:00,2007-05-07 08:00,2007-05-07 08:00,,2007-01-27 00:00,2007-01-27 00:00,,,2005-09-26 08:00,2005-10-21 17:00,,,,,PT_Normal,,,,,TtzJ9O6kTP+VwQeKa4NyiA,,,,N,0,0,,,2007-02-01 02:43,2007-02-04 01:05,hbe4678,hbe4678,,,0
3652,12459833,14517,6816185,13330,1,100,N,N,N,CP_Units,TT_Task,DT_FixedDUR2,RV_OK,TK_Complete,PK000MD33N,Recv. Planning V. Data MD303,,,,0,0,0,0,160,0,0,0,,2005-09-09 00:00,2005-10-26 00:00,2007-05-07 08:00,2007-05-07 08:00,,2007-01-27 00:00,2007-01-27 00:00,,,2005-09-26 08:00,2005-10-21 17:00,,,,,PT_Normal,,,,,xGi2OvG6Sd+lPkz0n4sFVQ,,,,N,0,0,,,2007-02-01 02:43,2007-02-04 01:05,hbe4678,hbe4678,,,0
3653,12459834,14517,6816185,13330,1,100,N,N,N,CP_Units,TT_Task,DT_FixedDUR2,RV_OK,TK_Complete,PK000MD31N,Recv. Planning V. Data MD301,,,,0,0,0,0,160,0,0,0,,2005-09-09 00:00,2005-10-10 00:00,2007-04-28 08:01,2007-04-28 08:01,,2007-01-27 00:00,2007-01-27 00:00,,,2005-09-26 08:00,2005-10-21 17:00,,,,,PT_Normal,,,,,s6MtNb16Q52gmJXouquJTg,,,,N,0,0,,,2007-02-01 02:43,2007-02-04 01:05,hbe4678,hbe4678,,,0
3654,12459835,14517,6816185,13330,1,100,N,N,N,CP_Units,TT_Task,DT_FixedDUR2,RV_OK,TK_Complete,EK000MD33E,Prepare & Issue Purchase ERW - MD303,,,,0,0,0,0,80,0,0,0,,2005-08-01 00:00,2005-08-04 00:00,2007-06-29 08:01,2007-06-29 08:01,,2007-01-27 00:00,2007-01-27 00:00,,,2005-09-05 08:01,2005-09-19 08:01,,,,,PT_Normal,,,,,wdfVsxGITNqbHALb4oSYTw,,,,N,0,0,,,2007-02-01 02:43,2007-02-04 01:05,hbe4678,hbe4678,,,0
3655,12459836,14517,6816185,13330,1,100,N,N,N,CP_Units,TT_Task,DT_FixedDUR2,RV_OK,TK_Complete,EK000MD103,MD305 Merc. Removal Bed - Develop & Issue Design Data for ERW,,,,0,0,0,0,24,0,0,0,,2005-11-10 00:00,2005-12-27 00:00,2007-06-19 08:01,2007-06-19 08:01,,2007-01-27 00:00,2007-01-27 00:00,,,2005-12-27 08:00,2005-12-29 17:00,,,,,PT_Normal,,,,,5gsnNoT1TDuVcKo5Tqj3bg,Y8OM8loy0UyfKnYwPnQ0sh,,,N,0,0,,,2007-02-01 02:43,2007-02-04 01:05,hbe4678,hbe4678,,,0
3656,12459837,14517,6816185,13330,1,100,N,N,N,CP_Units,TT_Task,DT_FixedDUR2,RV_OK,TK_Complete,EK000MD102,MD305 Merc. Removal Bed - Prepare & Issue Req for Inquiry to Procur.,,,,0,0,0,,16,,0,0,,2005-12-27 00:00,2006-01-05 00:00,2007-06-19 08:01,2007-06-19 08:01,,2007-01-27 00:00,2007-01-27 00:00,,,2005-12-27 08:00,2005-12-28 17:00,,,,,PT_Normal,,,,,gZN6WdpLRZ+pUeqbGGtQFQ,RX4tExCUsUOSeDF1do0bNx,,,N,0,0,,,2007-02-01 02:43,2007-02-04 01:05,hbe4678,hbe4678,,,0
3657,12459838,14517,6816185,13330,1,100,N,N,N,CP_Units,TT_Task,DT_FixedDUR2,RV_OK,TK_Complete,EK000MD104,MD305 Merc. Removal Bed - Technical Evaluation,,,,0,0,0,0,40,0,0,0,,2006-02-13 00:00,2006-03-01 00:00,2007-06-19 08:01,2007-06-19 08:01,,2007-01-27 00:00,2007-01-27 00:00,,,2006-03-06 08:00,2006-03-10 17:00,,,,,PT_Normal,,,,,2ViUnR5wQsWX2+1p9u+ZLw,kvXGJzk7Y02NfX+grTrlch,,,N,0,0,,,2007-02-01 02:43,2007-02-04 01:05,hbe4678,hbe4678,,,0
3658,12459839,14517,6816185,13330,1,100,N,N,N,CP_Units,TT_Task,DT_FixedDUR2,RV_OK,TK_Complete,EK000MD105,MD305 Merc. Removal Bed - Prepare & Issue Purchase ERW,,,,0,0,0,0,24,0,0,0,,2006-03-01 00:00,2006-03-03 17:00,2007-11-07 08:01,2007-11-07 08:01,,2007-01-27 00:00,2007-01-27 00:00,,,2006-02-27 08:00,2006-03-01 17:00,,,,,PT_Normal,,,,,ZZQ6f7YZSnO7pWpydTmm/A,LOHw5vOJfESSLM6brhdUCx,,,N,0,0,,,2007-02-01 02:43,2007-02-04 01:05,hbe4678,hbe4678,,,0
3659,12459840,14517,6816185,13330,1,100,N,N,N,CP_Units,TT_Task,DT_FixedDUR2,RV_OK,TK_Complete,EK000MD31B,Develop & Issue Design Data for ERW - MD301,,,,0,0,0,0,16,0,0,0,,2005-04-15 08:00,2005-04-18 17:00,2007-04-16 08:01,2007-04-16 08:01,,2007-01-27 00:00,2007-01-27 00:00,,,2005-04-15 08:00,2005-04-18 17:00,,,,,PT_Normal,,,,,7pw/KSV/Rt6/7P3KLC8MtA,,,,N,0,0,,,2007-02-01 02:43,2007-02-04 01:05,hbe4678,hbe4678,,,0
3660,12459841,14517,6816185,13330,1,100,N,N,N,CP_Units,TT_Task,DT_FixedDUR2,RV_OK,TK_Complete,EK000MD31C,Prepare & Issue Prelim. RFQ - MD301 to Proc.,,,,0,,0,,40,,,0,,2005-03-14 08:00,2005-03-18 17:00,2007-04-16 08:01,2007-04-16 08:01,,2007-01-27 00:00,2007-01-27 00:00,,,2005-03-14 08:00,2005-03-18 17:00,,,,,PT_Normal,,,,,gmNqkOwjT/azi6YcJbwIKg,,,,N,,,,,2007-02-01 02:43,2007-02-04 01:05,hbe4678,hbe4678,,,0
3661,12459842,14517,6816185,13330,1,100,N,N,N,CP_Units,TT_Task,DT_FixedDUR2,RV_OK,TK_Complete,EK000MD31D,Technical Evaluation  - MD301,,,,0,0,0,0,40,0,0,0,,2005-05-16 08:00,2005-05-26 00:00,2007-04-16 08:01,2007-04-16 08:01,,2007-01-27 00:00,2007-01-27 00:00,,,2005-05-16 08:00,2005-05-20 17:00,,,,,PT_Normal,,,,,y2LUEBJhQxq2rpQ6Ap/sYw,,,,N,0,0,,,2007-02-01 02:43,2007-02-04 01:05,hbe4678,hbe4678,,,0
3662,12459843,14517,6816185,13330,1,100,N,N,N,CP_Units,TT_Task,DT_FixedDUR2,RV_OK,TK_Complete,EK000MD31E,Prepare & Issue Purchase ERW - MD301,,,,0,0,0,0,48,0,0,0,,2005-06-03 08:00,2005-06-10 17:00,2007-06-05 08:01,2007-06-05 08:01,,2007-01-27 00:00,2007-01-27 00:00,,,2005-06-03 08:00,2005-06-10 17:00,,,,,PT_Normal,,,,,qyeBgSqYRg24ntDIX41X6Q,,,,N,0,0,,,2007-02-01 02:43,2007-02-04 01:05,hbe4678,hbe4678,,,0
3663,12459844,14517,6816185,13330,1,100,N,N,N,CP_Units,TT_Task,DT_FixedDUR2,RV_OK,TK_Complete,EK000MD31F,Update/Issue Formal Inquiry for ERW - MD301,,,,0,0,0,0,80,0,0,0,,2005-05-02 08:00,2005-05-17 00:00,2007-04-16 08:01,2007-04-16 08:01,,2007-01-27 00:00,2007-01-27 00:00,,,2005-05-02 08:00,2005-05-13 17:00,,,,,PT_Normal,,,,,DYR28s9wTJWMG5QHjUcASA,,,,N,0,0,,,2007-02-01 02:43,2007-02-04 01:05,hbe4678,hbe4678,,,0
3664,12459845,14517,6816185,13330,1,100,N,N,N,CP_Units,TT_Task,DT_FixedDUR2,RV_OK,TK_Complete,EK000MD33D,Technical Evaluation  - MD303,,,,0,0,0,0,40,0,0,0,,2005-05-16 08:00,2005-06-03 08:00,2007-04-09 08:01,2007-04-09 08:01,,2007-01-27 00:00,2007-01-27 00:00,,,2005-05-16 08:00,2005-05-20 17:00,,,,,PT_Normal,,,,,7t8SGIzcQiyEXpxZ2LAjTg,,,,N,0,0,,,2007-02-01 02:43,2007-02-04 01:05,hbe4678,hbe4678,,,0
3665,12459846,14517,6816185,13330,1,100,N,N,N,CP_Units,TT_Task,DT_FixedDUR2,RV_OK,TK_Complete,EK000MD32B,Develop & Issue Design Data for ERW - MD302,,,,0,,0,,40,,,0,,2005-04-15 08:00,2005-04-18 17:00,2007-05-07 08:00,2007-05-07 08:00,,2007-01-27 00:00,2007-01-27 00:00,,,2005-04-15 08:00,2005-04-21 17:00,,,,,PT_Normal,,,,,y7rATe3hRaWeuFB9CGJdOQ,,,,N,,,,,2007-02-01 02:43,2007-02-04 01:05,hbe4678,hbe4678,,,0
3666,12459847,14517,6816185,13330,1,100,N,N,N,CP_Units,TT_Task,DT_FixedDUR2,RV_OK,TK_Complete,EK000MD32C,Prepare & Issue Prelim. RFQ - MD302 to Proc.,,,,0,,0,,40,,,0,,2005-03-14 08:00,2005-03-18 17:00,2007-05-07 08:00,2007-05-07 08:00,,2007-01-27 00:00,2007-01-27 00:00,,,2005-03-14 08:00,2005-03-18 17:00,,,,,PT_Normal,,,,,vUFgDVlCTxCEsWCmwlquoQ,,,,N,,,,,2007-02-01 02:43,2007-02-04 01:05,hbe4678,hbe4678,,,0
3667,12459848,14517,6816185,13330,1,100,N,N,N,CP_Units,TT_Task,DT_FixedDUR2,RV_OK,TK_Complete,EK000MD32D,Technical Evaluation  - MD302,,,,0,0,0,0,40,0,0,0,,2005-05-16 00:00,2005-06-03 08:00,2007-05-07 08:00,2007-05-07 08:00,,2007-01-27 00:00,2007-01-27 00:00,,,2005-05-06 08:00,2005-05-12 17:00,,,,,PT_Normal,,,,,THnESt5fQpasDQr4kDvPLg,,,,N,0,0,,,2007-02-01 02:43,2007-02-04 01:05,hbe4678,hbe4678,,,0
3668,12459849,14517,6816185,13330,1,100,N,N,N,CP_Units,TT_Task,DT_FixedDUR2,RV_OK,TK_Complete,EK000MD32E,Prepare & Issue Purchase ERW - MD302,,,,0,0,0,0,24,0,0,0,,2005-06-06 00:00,2005-06-10 00:00,2007-05-07 08:00,2007-05-07 08:00,,2007-01-27 00:00,2007-01-27 00:00,,,2005-06-03 08:00,2005-06-07 17:00,,,,,PT_Normal,,,,,CYLAHcFJTlihEIq1IN3wLw,,,,N,0,0,,,2007-02-01 02:43,2007-02-04 01:05,hbe4678,hbe4678,,,0
3669,12459850,14517,6816185,13330,1,100,N,N,N,CP_Units,TT_Task,DT_FixedDUR2,RV_OK,TK_Complete,EK000MD32F,Update/Issue Formal Inquiry for ERW - MD302,,,,0,0,0,0,80,0,0,0,,2005-05-03 00:00,2005-05-20 17:00,2007-05-07 08:00,2007-05-07 08:00,,2007-01-27 00:00,2007-01-27 00:00,,,2005-04-26 08:00,2005-05-09 17:00,,,,,PT_Normal,,,,,TE6jAnG9SxqE4ochOEn1Og,,,,N,0,0,,,2007-02-01 02:43,2007-02-04 01:05,hbe4678,hbe4678,,,0
3670,12459851,14517,6816185,13330,1,100,N,N,N,CP_Units,TT_Task,DT_FixedDUR2,RV_OK,TK_Complete,EK000MD33F,Update/Issue Formal Inquiry for ERW - MD303,,,,0,0,0,0,80,0,0,0,,2005-04-25 08:00,2005-06-10 17:00,2007-04-09 08:01,2007-04-09 08:01,,2007-01-27 00:00,2007-01-27 00:00,,,2005-04-25 08:00,2005-05-06 17:00,,,,,PT_Normal,,,,,2mEP5lxjRj6DKv/I1s9Obg,,,,N,0,0,,,2007-02-01 02:43,2007-02-04 01:05,hbe4678,hbe4678,,,0
3671,12459852,14517,6816185,13330,1,100,N,N,N,CP_Units,TT_Task,DT_FixedDUR2,RV_OK,TK_Complete,EK000MD33B,Develop & Issue Design Data for ERW - MD303,,,,0,,0,,40,,,0,,2005-03-28 08:00,2005-04-07 17:00,2007-04-09 08:01,2007-04-09 08:01,,2007-01-27 00:00,2007-01-27 00:00,,,2005-03-28 08:00,2005-04-01 17:00,,,,,PT_Normal,,,,,bR7/9J2LTB6LIBeDnKfuyg,,,,N,,,,,2007-02-01 02:43,2007-02-04 01:05,hbe4678,hbe4678,,,0
3672,12459853,14517,6816185,13330,1,100,N,N,N,CP_Units,TT_Task,DT_FixedDUR2,RV_OK,TK_Complete,EK000MD005,Attend Alignment & strategy meetings,,,,0,,0,,120,,,0,,2005-02-21 08:00,2005-03-11 17:00,2006-11-28 08:01,2006-11-28 08:01,,2007-01-27 00:00,2007-01-27 00:00,,,2005-02-21 08:00,2005-03-11 17:00,,,,,PT_Normal,,,,,z9pCnD0wQcaZYy7nujjOPw,,,,N,,,,,2007-02-01 02:43,2007-02-04 01:05,hbe4678,hbe4678,,,0
3673,12459854,14517,6816185,13330,1,100,N,N,N,CP_Units,TT_Task,DT_FixedDUR2,RV_OK,TK_Complete,EK000MD015,Conversion of drawings to metric units,,,,0,,0,,168,,,0,,2005-02-21 08:00,2005-03-21 17:00,2009-02-13 17:00,2009-02-13 17:00,,2007-01-27 00:00,2007-01-27 00:00,,,2005-02-21 08:00,2005-03-21 17:00,,,,,PT_Normal,,,,,0IQTlrgcRmiSitQwHlT0Tg,,,,N,,,,,2007-02-01 02:43,2007-02-04 01:05,hbe4678,hbe4678,,,0
3674,12459855,14517,6816185,13330,1,100,N,N,N,CP_Units,TT_Task,DT_FixedDUR2,RV_OK,TK_Complete,EK000MD020,Equipment Modeling for Vessel - MEC,,,,0,0,0,0,976,0,0,0,,2005-04-13 00:00,2006-04-25 00:00,2009-02-13 17:00,2009-02-13 17:00,,2007-01-27 00:00,2007-01-27 00:00,,,2005-05-27 08:00,2005-11-17 17:00,,,,,PT_Normal,,,,,eMYX03J4QSiYK85AL6W8TA,,,,N,0,0,,,2007-02-01 02:43,2007-02-04 01:05,hbe4678,hbe4678,,,0
3675,12459856,14517,6816185,13330,1,100,N,N,N,CP_Units,TT_Task,DT_FixedDUR2,RV_OK,TK_Complete,EK000MD025,Prepare job quality drawings for ERW,,,,0,0,0,0,80,0,0,0,,2005-04-25 00:00,2005-06-27 17:00,2009-02-13 17:00,2009-02-13 17:00,,2007-01-27 00:00,2007-01-27 00:00,,,2005-05-24 08:00,2005-06-07 17:00,,,,,PT_Normal,,,,,86q69HT8R3yf1YPb7viN6Q,,,,N,0,0,,,2007-02-01 02:43,2007-02-04 01:05,hbe4678,hbe4678,,,0
3676,12459857,14517,6816185,13330,1,100,N,N,N,CP_Units,TT_Task,DT_FixedDUR2,RV_OK,TK_Complete,EK000MD055,Pre-qualification trip  to vendors shop (105-D),,,,0,0,0,0,48,0,0,0,,2005-10-03 08:00,2005-10-06 00:00,2007-06-29 08:01,2007-06-29 08:01,,2007-01-27 00:00,2007-01-27 00:00,,,2005-10-03 08:00,2005-10-10 17:00,,,,,PT_Normal,,,,,7BXkBeU1QwmjD3n18HZ+bg,,,,N,0,0,,,2007-02-01 02:43,2007-02-04 01:05,hbe4678,hbe4678,,,0
3677,12459858,14517,6816185,13330,1,100,N,N,N,CP_Units,TT_Task,DT_FixedDUR2,RV_OK,TK_Complete,EK000MD060,Prepare Vessel work plan & other quality documents,,,,0,,0,,40,,,0,,2005-04-01 08:00,2005-04-01 17:00,2009-02-15 08:01,2009-02-15 08:01,,2007-01-27 00:00,2007-01-27 00:00,,,2005-04-01 08:00,2005-04-07 17:00,,,,,PT_Normal,,,,,LRb7U2RoSW+6h2aL2Xt1bg,,,,N,,,,,2007-02-01 02:43,2007-02-04 01:05,hbe4678,hbe4678,,,0
3678,12459859,14517,6816185,13330,1,100,N,N,N,CP_Units,TT_Task,DT_FixedDUR2,RV_OK,TK_Complete,EK000MD21B,Develop & Issue Design Data for ERW - MD201,,,,0,0,0,,96,,0,0,,2005-04-18 08:00,2005-06-08 00:00,2007-01-09 08:01,2007-01-09 08:01,,2007-01-27 00:00,2007-01-27 00:00,,,2005-04-18 08:00,2005-05-03 17:00,,,,,PT_Normal,,,,,sl0R3981QOaguJAYbU6KVw,,,,N,0,0,,,2007-02-01 02:43,2007-02-04 01:05,hbe4678,hbe4678,,,0
3679,12459860,14517,6816185,13330,1,100,N,N,N,CP_Units,TT_Task,DT_FixedDUR2,RV_OK,TK_Complete,EK000MD21D,Technical Evaluation  - MD201,,,,0,0,0,0,40,0,0,0,,2005-08-16 00:00,2005-09-09 17:00,2007-01-09 08:01,2007-01-09 08:01,,2007-01-27 00:00,2007-01-27 00:00,,,2005-08-11 08:00,2005-08-17 17:00,,,,,PT_Normal,,,,,tez2AStUQzWQ70A+R2Zxow,,,,N,0,0,,,2007-02-01 02:43,2007-02-04 01:05,hbe4678,hbe4678,,,0
3680,12459861,14517,6816185,13330,1,100,N,N,N,CP_Units,TT_Task,DT_FixedDUR2,RV_OK,TK_Complete,EK000MD21E,Prepare & Issue Purchase ERW - MD201,,,,0,0,0,0,24,0,0,0,,2005-09-26 08:00,2005-09-28 17:00,2007-06-12 08:01,2007-06-12 08:01,,2007-01-27 00:00,2007-01-27 00:00,,,2005-09-26 08:00,2005-09-28 17:00,,,,,PT_Normal,,,,,kmEEAyRdTuay6Ikz5lT2EA,,,,N,0,0,,,2007-02-01 02:43,2007-02-04 01:05,hbe4678,hbe4678,,,0
3681,12459862,14517,6816185,13330,1,100,N,N,N,CP_Units,TT_Task,DT_FixedDUR2,RV_OK,TK_Complete,EK000MD21F,Develop & Issue Inquiry ERW - MD201,,,,0,0,0,0,120,0,0,0,,2005-05-17 08:00,2005-07-18 00:00,2007-01-09 08:01,2007-01-09 08:01,,2007-01-27 00:00,2007-01-27 00:00,,,2005-05-17 08:00,2005-06-07 17:00,,,,,PT_Normal,,,,,E4469z22Sq23xagMIWwekQ,,,,N,0,0,,,2007-02-01 02:43,2007-02-04 01:05,hbe4678,hbe4678,,,0
3682,12459863,14517,6816185,13330,1,100,N,N,N,CP_Units,TT_Task,DT_FixedDUR2,RV_OK,TK_Complete,EK000MD43B,Develop & Issue Design Data for ERW - MD403,,,,0,0,0,0,40,0,0,0,,2005-05-09 00:00,2005-05-13 00:00,2007-04-24 08:01,2007-04-24 08:01,,2007-01-27 00:00,2007-01-27 00:00,,,2005-05-16 08:00,2005-05-20 17:00,,,,,PT_Normal,,,,,thf/il6SRHiikKf9WwZtnw,,,,N,0,0,,,2007-02-01 02:43,2007-02-04 01:05,hbe4678,hbe4678,,,0
3683,12459864,14517,6816185,13330,1,100,N,N,N,CP_Units,TT_Task,DT_FixedDUR2,RV_OK,TK_Complete,EK000MD43C,Prepare & Issue Prelim. RFQ - MD403 to Proc.,,,,0,,0,,16,,,0,,2005-03-21 08:00,2005-03-22 17:00,2007-04-24 08:01,2007-04-24 08:01,,2007-01-27 00:00,2007-01-27 00:00,,,2005-03-21 08:00,2005-03-22 17:00,,,,,PT_Normal,,,,,APlI0tuAQxeCa1LJ4a2mlw,,,,N,,,,,2007-02-01 02:43,2007-02-04 01:05,hbe4678,hbe4678,,,0
3684,12459865,14517,6816185,13330,1,100,N,N,N,CP_Units,TT_Task,DT_FixedDUR2,RV_OK,TK_Complete,EK000MD43D,Technical Evaluation  - MD403,,,,0,0,0,0,40,0,0,0,,2005-05-03 00:00,2005-05-26 00:00,2007-04-24 08:01,2007-04-24 08:01,,2007-01-27 00:00,2007-01-27 00:00,,,2005-04-26 08:00,2005-05-02 17:00,,,,,PT_Normal,,,,,g/5ppdEASoWDzPyUUnQ9dw,,,,N,0,0,,,2007-02-01 02:43,2007-02-04 01:05,hbe4678,hbe4678,,,0
3685,12459866,14517,6816185,13330,1,100,N,N,N,CP_Units,TT_Task,DT_FixedDUR2,RV_OK,TK_Complete,EK000MD43E,Prepare & Issue Purchase ERW - MD403,,,,0,0,0,0,48,0,0,0,,2005-06-06 00:00,2005-06-10 17:00,2007-10-16 17:00,2007-10-16 17:00,,2007-01-27 00:00,2007-01-27 00:00,,,2005-06-03 08:00,2005-06-10 17:00,,,,,PT_Normal,,,,,ccmj+a9YScqlbnCE8dptBw,,,,N,0,0,,,2007-02-01 02:43,2007-02-04 01:05,hbe4678,hbe4678,,,0
3686,12459867,14517,6816185,13330,1,100,N,N,N,CP_Units,TT_Task,DT_FixedDUR2,RV_OK,TK_Complete,EK000MD43F,Update/Issue Formal Inquiry for ERW - MD403,,,,0,0,0,0,80,0,0,0,,2005-05-16 00:00,2005-05-26 00:00,2007-04-24 08:01,2007-04-24 08:01,,2007-01-27 00:00,2007-01-27 00:00,,,2005-05-20 08:00,2005-06-03 17:00,,,,,PT_Normal,,,,,pW4/aaLISgCxKZmKV5HArA,,,,N,0,0,,,2007-02-01 02:43,2007-02-04 01:05,hbe4678,hbe4678,,,0
3687,12459868,14517,6816185,13330,1,100,N,N,N,CP_Units,TT_Task,DT_FixedDUR2,RV_OK,TK_Complete,EK000MD44B,Develop & Issue Design Data for ERW - MD404,,,,0,0,0,0,40,0,0,0,,2005-05-23 00:00,2005-05-26 00:00,2007-01-09 08:01,2007-01-09 08:01,,2007-01-27 00:00,2007-01-27 00:00,,,2005-06-06 08:00,2005-06-10 17:00,,,,,PT_Normal,,,,,wniV7mVHT26b7GQgPR+NQg,,,,N,0,0,,,2007-02-01 02:43,2007-02-04 01:05,hbe4678,hbe4678,,,0
3688,12459869,14517,6816185,13330,1,100,N,N,N,CP_Units,TT_Task,DT_FixedDUR2,RV_OK,TK_Complete,EK000MD45F,Update/Issue Formal Inquiry for ERW - MD405,,,,0,0,0,0,80,0,0,0,,2005-06-13 00:00,2005-06-30 17:00,2007-04-15 08:01,2007-04-15 08:01,,2007-01-27 00:00,2007-01-27 00:00,,,2005-06-03 08:00,2005-06-16 17:00,,,,,PT_Normal,,,,,jnGblkDPQTqt7Ej014Eg0g,,,,N,0,0,,,2007-02-01 02:43,2007-02-04 01:05,hbe4678,hbe4678,,,0
3689,12459870,14517,6816185,13330,1,100,N,N,N,CP_Units,TT_Task,DT_FixedDUR2,RV_OK,TK_Complete,EK000MD44F,Update/Issue Formal Inquiry for ERW - MD404,,,,0,0,0,0,120,0,0,0,,2005-05-27 08:00,2005-06-01 00:00,2007-01-09 08:01,2007-01-09 08:01,,2007-01-27 00:00,2007-01-27 00:00,,,2005-05-27 08:00,2005-06-17 17:00,,,,,PT_Normal,,,,,QZVySj37Sf2wf5MtNAlR7Q,,,,N,0,0,,,2007-02-01 02:43,2007-02-04 01:05,hbe4678,hbe4678,,,0
3690,12459871,14517,6816185,13330,1,100,N,N,N,CP_Units,TT_Task,DT_FixedDUR2,RV_OK,TK_Complete,EK000MD45B,Develop & Issue Design Data for ERW - MD405,,,,0,0,0,0,40,0,0,0,,2005-05-09 00:00,2005-06-08 00:00,2007-04-15 08:01,2007-04-15 08:01,,2007-01-27 00:00,2007-01-27 00:00,,,2005-06-06 08:00,2005-06-10 17:00,,,,,PT_Normal,,,,,qjhR+eSdSqKqfY8xeqKxTw,,,,N,0,0,,,2007-02-01 02:43,2007-02-04 01:05,hbe4678,hbe4678,,,0
3691,12459872,14517,6816185,13330,1,100,N,N,N,CP_Units,TT_Task,DT_FixedDUR2,RV_OK,TK_Complete,EK000MD41C,Prepare & Issue Prelim. RFQ - MD401 to Proc.,,,,0,,0,,16,,,0,,2005-03-21 08:00,2005-03-22 17:00,2007-05-26 08:01,2007-05-26 08:01,,2007-01-27 00:00,2007-01-27 00:00,,,2005-03-21 08:00,2005-03-22 17:00,,,,,PT_Normal,,,,,OEyXDztcS3aDnR07fZCSuQ,,,,N,,,,,2007-02-01 02:43,2007-02-04 01:05,hbe4678,hbe4678,,,0
3692,12459873,14517,6816185,13330,1,100,N,N,N,CP_Units,TT_Task,DT_FixedDUR2,RV_OK,TK_Complete,EK000MD34B,Develop & Issue Design Data for ERW - MD304,,,,0,,0,,40,,,0,,2005-04-15 08:00,2005-04-18 17:00,2007-04-15 08:01,2007-04-15 08:01,,2007-01-27 00:00,2007-01-27 00:00,,,2005-04-15 08:00,2005-04-21 17:00,,,,,PT_Normal,,,,,OK1vXekISeGoFBgyZGvC8Q,,,,N,,,,,2007-02-01 02:43,2007-02-04 01:05,hbe4678,hbe4678,,,0
3693,12459874,14517,6816185,13330,1,100,N,N,N,CP_Units,TT_Task,DT_FixedDUR2,RV_OK,TK_Complete,EK000MD34C,Prepare & Issue Prelim. RFQ - MD304 to Proc.,,,,0,,0,,40,,,0,,2005-03-14 08:00,2005-03-18 17:00,2007-04-15 08:01,2007-04-15 08:01,,2007-01-27 00:00,2007-01-27 00:00,,,2005-03-14 08:00,2005-03-18 17:00,,,,,PT_Normal,,,,,rUc8AVKMTgyT3XhsBbrZug,,,,N,,,,,2007-02-01 02:43,2007-02-04 01:05,hbe4678,hbe4678,,,0
3694,12459875,14517,6816185,13330,1,100,N,N,N,CP_Units,TT_Task,DT_FixedDUR2,RV_OK,TK_Complete,EK000MD34D,Technical Evaluation  - MD304,,,,0,0,0,,40,,0,0,,2005-04-15 08:00,2005-05-23 17:00,2007-04-15 08:01,2007-04-15 08:01,,2007-01-27 00:00,2007-01-27 00:00,,,2005-04-15 08:00,2005-04-21 17:00,,,,,PT_Normal,,,,,/dadbWQeSNWZblEtwcH/CA,,,,N,0,0,,,2007-02-01 02:43,2007-02-04 01:05,hbe4678,hbe4678,,,0
3695,12459876,14517,6816185,13330,1,100,N,N,N,CP_Units,TT_Task,DT_FixedDUR2,RV_OK,TK_Complete,EK000MD34E,Prepare & Issue Purchase ERW - MD304,,,,0,0,0,0,48,0,0,0,,2005-06-03 08:00,2005-06-10 17:00,2007-05-07 08:00,2007-05-07 08:00,,2007-01-27 00:00,2007-01-27 00:00,,,2005-06-03 08:00,2005-06-10 17:00,,,,,PT_Normal,,,,,fYLSuIfxSDK9g1MlJVr0eQ,,,,N,0,0,,,2007-02-01 02:43,2007-02-04 01:05,hbe4678,hbe4678,,,0
3696,12459877,14517,6816185,13330,1,100,N,N,N,CP_Units,TT_Task,DT_FixedDUR2,RV_OK,TK_Complete,EK000MD34F,Update/Issue Formal Inquiry for ERW - MD304,,,,0,0,0,,80,,0,0,,2005-04-20 08:00,2005-05-20 17:00,2007-04-15 08:01,2007-04-15 08:01,,2007-01-27 00:00,2007-01-27 00:00,,,2005-04-20 08:00,2005-05-03 17:00,,,,,PT_Normal,,,,,H4TouObSQZ2OhQj9QwlxtA,,,,N,0,0,,,2007-02-01 02:43,2007-02-04 01:05,hbe4678,hbe4678,,,0
3697,12459878,14517,6816185,13330,1,100,N,N,N,CP_Units,TT_Task,DT_FixedDUR2,RV_OK,TK_Complete,EK000MD41B,Develop & Issue Design Data for ERW - MD401,,,,0,0,0,0,88,0,0,0,,2005-05-09 08:00,2005-05-19 00:00,2007-10-01 08:00,2007-10-01 08:00,,2007-01-27 00:00,2007-01-27 00:00,,,2005-05-09 08:00,2005-05-23 17:00,,,,,PT_Normal,,,,,k/4FdWGlRiGd50rQUIwMQg,,,,N,0,0,,,2007-02-01 02:43,2007-02-04 01:05,hbe4678,hbe4678,,,0
3698,12459879,14517,6816185,13330,1,100,N,N,N,CP_Units,TT_Task,DT_FixedDUR2,RV_OK,TK_Complete,EK000MD41D,Technical Evaluation  - MD401,,,,0,0,0,,40,,0,0,,2005-04-15 08:00,2005-05-23 17:00,2007-05-26 08:01,2007-05-26 08:01,,2007-01-27 00:00,2007-01-27 00:00,,,2005-04-15 08:00,2005-04-21 17:00,,,,,PT_Normal,,,,,RHonGrCdSMaKrh8FzGkwzA,,,,N,0,0,,,2007-02-01 02:43,2007-02-04 01:05,hbe4678,hbe4678,,,0
3699,12459880,14517,6816185,13330,1,100,N,N,N,CP_Units,TT_Task,DT_FixedDUR2,RV_OK,TK_Complete,EK000MD41E,Prepare & Issue Purchase ERW - MD401,,,,0,0,0,0,32,0,0,0,,2005-08-01 00:00,2005-08-04 00:00,2007-10-01 08:00,2007-10-01 08:00,,2007-01-27 00:00,2007-01-27 00:00,,,2005-08-09 08:00,2005-08-12 17:00,,,,,PT_Normal,,,,,t1jkbSCTQruJrYC01q+bFg,,,,N,0,0,,,2007-02-01 02:43,2007-02-04 01:05,hbe4678,hbe4678,,,0
3700,12459881,14517,6816185,13330,1,100,N,N,N,CP_Units,TT_Task,DT_FixedDUR2,RV_OK,TK_Complete,EK000MD41F,Update/Issue Formal Inquiry for ERW - MD401,,,,0,0,0,0,40,0,0,0,,2005-05-20 08:00,2005-05-26 17:00,2007-10-01 08:00,2007-10-01 08:00,,2007-01-27 00:00,2007-01-27 00:00,,,2005-05-20 08:00,2005-05-26 17:00,,,,,PT_Normal,,,,,dOqcRV2fSKSFQyOGapV0zw,,,,N,0,0,,,2007-02-01 02:43,2007-02-04 01:05,hbe4678,hbe4678,,,0
3701,12459882,14517,6816185,13330,1,100,N,N,N,CP_Units,TT_Task,DT_FixedDUR2,RV_OK,TK_Complete,EK000MD42B,Develop & Issue Design Data for ERW - MD402,,,,0,0,0,0,40,0,0,0,,2005-05-09 08:00,2005-05-13 17:00,2007-01-09 08:01,2007-01-09 08:01,,2007-01-27 00:00,2007-01-27 00:00,,,2005-05-09 08:00,2005-05-13 17:00,,,,,PT_Normal,,,,,BDxhJjLqQwerApTkWwQIqA,,,,N,0,0,,,2007-02-01 02:43,2007-02-04 01:05,hbe4678,hbe4678,,,0
3702,12459883,14517,6816185,13330,1,100,N,N,N,CP_Units,TT_Task,DT_FixedDUR2,RV_OK,TK_Complete,EK000MD42F,Update/Issue Formal Inquiry for ERW - MD402,,,,0,0,0,0,80,0,0,0,,2005-05-16 08:00,2005-05-20 00:00,2007-01-09 08:01,2007-01-09 08:01,,2007-01-27 00:00,2007-01-27 00:00,,,2005-05-06 08:00,2005-05-19 17:00,,,,,PT_Normal,,,,,POImcaCVS0iauILK7g9d5w,,,,N,0,0,,,2007-02-01 02:43,2007-02-04 01:05,hbe4678,hbe4678,,,0
3703,12459884,14517,6816185,13330,1,100,N,N,N,CP_Units,TT_Task,DT_FixedDUR2,RV_OK,TK_Complete,EK000MD33C,Prepare & Issue Prelim. RFQ - MD303 to Proc.,,,,0,,0,,40,,,0,,2005-03-21 08:00,2005-03-24 17:00,2007-01-09 08:01,2007-01-09 08:01,,2007-01-27 00:00,2007-01-27 00:00,,,2005-03-21 08:00,2005-03-25 17:00,,,,,PT_Normal,,,,,aIXD/BsRS5q7+HzqpB7tVA,,,,N,,,,,2007-02-01 02:43,2007-02-04 01:05,hbe4678,hbe4678,,,0
3704,12459885,14517,6816185,13330,1,100,N,N,N,CP_Units,TT_Task,DT_FixedDUR2,RV_OK,TK_Complete,EK000MD22F,Update/Issue Formal Inquiry for ERW - MD202,,,,0,0,0,0,80,0,0,0,,2005-06-01 00:00,2005-06-17 00:00,2007-05-07 08:00,2007-05-07 08:00,,2007-01-27 00:00,2007-01-27 00:00,,,2005-05-27 08:00,2005-06-10 17:00,,,,,PT_Normal,,,,,UNYsHw1CTkqI3m9WfmYWDg,,,,N,0,0,,,2007-02-01 02:43,2007-02-04 01:05,hbe4678,hbe4678,,,0
3705,12459886,14517,6816185,13330,1,100,N,N,N,CP_Units,TT_Task,DT_FixedDUR2,RV_OK,TK_Complete,EK000MF33F,Develop & Issue Design Data for Tank Subcontract - MF311,,,,0,0,0,0,120,0,0,0,,2005-04-26 08:00,2005-05-09 17:00,2007-02-06 08:01,2007-02-06 08:01,,2007-01-27 00:00,2007-01-27 00:00,,,2005-04-26 08:00,2005-05-16 17:00,,,,,PT_Normal,,,,,acSP6SluTCKE8Q7txpNOzw,,,,N,0,0,,,2007-02-01 02:43,2007-02-04 01:05,hbe4678,hbe4678,,,0
3706,12459887,14517,6816185,13330,1,100,N,N,N,CP_Units,TT_Task,DT_FixedDUR2,RV_OK,TK_Complete,EK000MF32F,Develop & Issue Design Data for Tank Subcontract - MF302,,,,0,0,0,0,120,0,0,0,,2005-04-26 00:00,2005-05-09 00:00,2007-02-06 08:01,2007-02-06 08:01,,2007-01-27 00:00,2007-01-27 00:00,,,2005-05-06 08:00,2005-05-26 17:00,,,,,PT_Normal,,,,,QQ6TLDEaQcqR5iiLwBC6uQ,,,,N,0,0,,,2007-02-01 02:43,2007-02-04 01:05,hbe4678,hbe4678,,,0
3707,12459888,14517,6816185,13330,1,100,N,N,N,CP_Units,TT_Task,DT_FixedDUR2,RV_OK,TK_Complete,EK000MF33B,Develop/Issue Load Sht & Design Data ERW - MF311,,,,0,0,0,,80,,0,0,,2005-04-18 08:00,2005-04-26 00:00,2007-02-06 08:01,2007-02-06 08:01,,2007-01-27 00:00,2007-01-27 00:00,,,2005-04-18 08:00,2005-04-29 17:00,,,,,PT_Normal,,,,,hkWgZ/7aQtKh5nRL5EtjbA,,,,N,0,0,,,2007-02-01 02:43,2007-02-04 01:05,hbe4678,hbe4678,,,0
3708,12459889,14517,6816185,13330,1,100,N,N,N,CP_Units,TT_Task,DT_FixedDUR2,RV_OK,TK_Complete,EK000MD46F,Update/Issue Formal Inquiry for ERW - MD411,,,,0,0,0,0,80,0,0,0,,2005-06-13 08:00,2005-06-30 17:00,2007-02-07 08:01,2007-02-07 08:01,,2007-01-27 00:00,2007-01-27 00:00,,,2005-06-13 08:00,2005-06-24 17:00,,,,,PT_Normal,,,,,Jbq6gBIBQhm+/oFL/8AETw,,,,N,0,0,,,2007-02-01 02:43,2007-02-04 01:05,hbe4678,hbe4678,,,0
3709,12459890,14517,6816185,13330,1,100,N,N,N,CP_Units,TT_Task,DT_FixedDUR2,RV_OK,TK_Complete,EK000MF31B,Develop & Issue Design Data for Tank Subcontrac - MF301,,,,0,0,0,0,40,0,0,0,,2005-05-02 00:00,2005-05-09 00:00,2007-02-06 08:01,2007-02-06 08:01,,2007-01-27 00:00,2007-01-27 00:00,,,2005-05-09 08:00,2005-05-13 17:00,,,,,PT_Normal,,,,,r4apEPXCRiqi8B+jNbP5JQ,,,,N,0,0,,,2007-02-01 02:43,2007-02-04 01:05,hbe4678,hbe4678,,,0
3710,12459891,14517,6816185,13330,1,100,N,N,N,CP_Units,TT_Task,DT_FixedDUR2,RV_OK,TK_Complete,EK000MD47B,Develop & Issue Design Data for ERW - MD406,,,,0,0,0,0,40,0,0,0,,2005-05-23 00:00,2005-05-26 00:00,2007-01-09 08:01,2007-01-09 08:01,,2007-01-27 00:00,2007-01-27 00:00,,,2005-06-06 08:00,2005-06-10 17:00,,,,,PT_Normal,,,,,pTmVlha1Tl69bPq3+DZ+tg,,,,N,0,0,,,2007-02-01 02:43,2007-02-04 01:05,hbe4678,hbe4678,,,0
3711,12459892,14517,6816185,13330,1,100,N,N,N,CP_Units,TT_Task,DT_FixedDUR2,RV_OK,TK_Complete,EK000MD51B,Develop & Issue Design Data for ERW - MD501,,,,0,0,0,,48,,0,0,,2005-04-20 08:00,2005-04-28 00:00,2007-04-28 08:01,2007-04-28 08:01,,2007-01-27 00:00,2007-01-27 00:00,,,2005-04-20 08:00,2005-04-27 17:00,,,,,PT_Normal,,,,,KGPaD9rhQbqvnEkAwWILQA,,,,N,0,0,,,2007-02-01 02:43,2007-02-04 01:05,hbe4678,hbe4678,,,0
3712,12459893,14517,6816185,13330,1,100,N,N,N,CP_Units,TT_Task,DT_FixedDUR2,RV_OK,TK_Complete,EK000MD51C,Prepare & Issue Prelim. RFQ - MD501 to Proc.,,,,0,,0,,40,,,0,,2005-03-14 08:00,2005-03-18 17:00,2007-04-28 08:01,2007-04-28 08:01,,2007-01-27 00:00,2007-01-27 00:00,,,2005-03-14 08:00,2005-03-18 17:00,,,,,PT_Normal,,,,,5HaujhDsSIury/roowFfyw,,,,N,,,,,2007-02-01 02:43,2007-02-04 01:05,hbe4678,hbe4678,,,0
3713,12459894,14517,6816185,13330,1,100,N,N,N,CP_Units,TT_Task,DT_FixedDUR2,RV_OK,TK_Complete,EK000MD51D,Technical Evaluation  - MD501,,,,0,0,0,0,40,0,0,0,,2005-04-25 08:00,2005-05-04 00:00,2007-04-28 08:01,2007-04-28 08:01,,2007-01-27 00:00,2007-01-27 00:00,,,2005-04-25 08:00,2005-04-29 17:00,,,,,PT_Normal,,,,,BCbvnMAsTxmxwFn0bA3j2g,,,,N,0,0,,,2007-02-01 02:43,2007-02-04 01:05,hbe4678,hbe4678,,,0
3714,12459895,14517,6816185,13330,1,100,N,N,N,CP_Units,TT_Task,DT_FixedDUR2,RV_OK,TK_Complete,EK000MD51E,Prepare & Issue Purchase ERW - MD501,,,,0,0,0,0,24,0,0,0,,2005-06-08 08:00,2005-06-10 17:00,2007-12-03 08:01,2007-12-03 08:01,,2007-01-27 00:00,2007-01-27 00:00,,,2005-06-08 08:00,2005-06-10 17:00,,,,,PT_Normal,,,,,DUFjOaH1RGqRH6Caq6bDZQ,,,,N,0,0,,,2007-02-01 02:43,2007-02-04 01:05,hbe4678,hbe4678,,,0
3715,12459896,14517,6816185,13330,1,100,N,N,N,CP_Units,TT_Task,DT_FixedDUR2,RV_OK,TK_Complete,EK000MD51F,Update/Issue Formal Inquiry for ERW - MD501,,,,0,0,0,0,80,0,0,0,,2005-04-29 00:00,2005-05-09 00:00,2007-04-28 08:01,2007-04-28 08:01,,2007-01-27 00:00,2007-01-27 00:00,,,2005-04-28 08:00,2005-05-11 17:00,,,,,PT_Normal,,,,,HLEIjuQVTFGm86yXWsi0fA,,,,N,0,0,,,2007-02-01 02:43,2007-02-04 01:05,hbe4678,hbe4678,,,0
3716,12459897,14517,6816185,13330,1,100,N,N,N,CP_Units,TT_Task,DT_FixedDUR2,RV_OK,TK_Complete,EK000MF32B,Develop/Issue Load Sht & Design Data ERW - MF302,,,,0,0,0,,80,,0,0,,2005-04-18 08:00,2005-05-06 17:00,2007-02-06 08:01,2007-02-06 08:01,,2007-01-27 00:00,2007-01-27 00:00,,,2005-04-18 08:00,2005-04-29 17:00,,,,,PT_Normal,,,,,fIKnxy59QqOs5sAf21iyrQ,,,,N,0,0,,,2007-02-01 02:43,2007-02-04 01:05,hbe4678,hbe4678,,,0
3717,12459898,14517,6816186,4047,1,100,N,N,N,CP_Drtn,TT_Task,DT_FixedDUR2,RV_OK,TK_Complete,EK000MU32D,01D MU322 Technical Evaluation,,,,0,0,0,0,40,0,0,0,,2006-01-23 00:00,2006-03-03 00:00,2007-04-08 08:01,2007-04-08 08:01,,2007-01-27 00:00,2007-01-27 00:00,,,2006-02-23 08:00,2006-03-01 17:00,,,,,PT_Normal,,,,,hnBnioB1SgWPIR5/AV//HA,,,,N,0,0,,,2007-02-01 02:43,2007-02-04 01:05,hbe4678,hbe4678,,,0
3718,12459899,14517,6816186,4047,1,100,N,N,N,CP_Drtn,TT_Task,DT_FixedDUR2,RV_OK,TK_Complete,EK000MU32L,01D MU322 Define Chemical Treatment Requirements,,,,0,0,0,0,80,0,0,0,,2005-08-29 00:00,2005-09-09 00:00,2007-04-08 08:01,2007-04-08 08:01,,2007-01-27 00:00,2007-01-27 00:00,,,2006-02-27 08:00,2006-03-10 17:00,,,,,PT_Normal,,,,,8mS6Wg6HR0KuZmxFltlzww,,,,N,0,0,,,2007-02-01 02:43,2007-02-04 01:05,hbe4678,hbe4678,,,0
3719,12459900,14517,6816186,13330,1,100,N,N,N,CP_Units,TT_Task,DT_FixedDUR2,RV_OK,TK_Complete,EK000MU31L,Define Chemical Treatment Requirements - MU310,,,,0,0,0,0,80,0,0,0,,2005-08-29 08:00,2005-09-09 17:00,2007-01-09 08:01,2007-01-09 08:01,,2007-01-27 00:00,2007-01-27 00:00,,,2005-08-29 08:00,2005-09-09 17:00,,,,,PT_Normal,,,,,ZXu9nUVURNKei+aThE1xGQ,B0t02uVp00yko8fK/OTLEh,,,N,0,0,,,2007-02-01 02:43,2007-02-04 01:05,hbe4678,hbe4678,,,0
3720,12459901,14517,6816186,13330,1,100,N,N,N,CP_Units,TT_Task,DT_FixedDUR2,RV_OK,TK_Complete,EK000ML50Z,Technical Evaluation  - ML500,,,,0,0,0,0,120,0,0,0,,2006-01-10 00:00,2006-01-30 17:00,2007-02-07 08:01,2007-02-07 08:01,,2007-01-27 00:00,2007-01-27 00:00,,,2006-01-16 08:00,2006-02-03 17:00,,,,,PT_Normal,,,,,878VYhBBR/m/GCDUBEOjAQ,zlyBhsSoy0yZ6mcMoHkIGx,,,N,0,0,,,2007-02-01 02:43,2007-02-04 01:05,hbe4678,hbe4678,,,0
3721,12459902,14517,6816186,13330,1,100,N,N,N,CP_Units,TT_Task,DT_FixedDUR2,RV_OK,TK_Complete,EK000MJ31X,Technical Evaluation  - MJ301,,,,0,0,0,0,72,0,0,0,,2005-08-25 00:00,2005-09-09 17:00,2007-03-07 08:01,2007-03-07 08:01,,2007-01-27 00:00,2007-01-27 00:00,,,2005-08-29 08:00,2005-09-08 17:00,,,,,PT_Normal,,,,,u+VysGBLSHWGKqIT7gTSeQ,nsm8f41mOUCOIGS58dp4WB,,,N,0,0,,,2007-02-01 02:43,2007-02-04 01:05,hbe4678,hbe4678,,,0
3722,12459903,14517,6816186,13330,1,100,N,N,N,CP_Units,TT_Task,DT_FixedDUR2,RV_OK,TK_Complete,PK000MJ32X,Technical Evaluation  - MJ302,,,,0,0,0,0,72,0,0,0,,2005-08-25 00:00,2005-09-09 17:00,2007-01-09 08:01,2007-01-09 08:01,,2007-01-27 00:00,2007-01-27 00:00,,,2005-08-29 08:00,2005-09-08 17:00,,,,,PT_Normal,,,,,j9raGPrzT6qqEwZsLEeCvQ,dgzvIvNUUUetpOsKpXTYWB,,,N,0,0,,,2007-02-01 02:43,2007-02-04 01:05,hbe4678,hbe4678,,,0
3723,12459904,14517,6816186,13330,1,100,N,N,N,CP_Units,TT_Task,DT_FixedDUR2,RV_OK,TK_Complete,EK000MJ35D,Technical Evaluation  - MJ305,,,,0,0,0,0,40,0,0,0,,2005-04-26 08:00,2005-05-02 17:00,2007-08-30 08:00,2007-08-30 08:00,,2007-01-27 00:00,2007-01-27 00:00,,,2005-04-26 08:00,2005-05-02 17:00,,,,,PT_Normal,,,,,WU5tiiBlQ7aqqq+7KaPU5g,,,,N,0,0,,,2007-02-01 02:43,2007-02-04 01:05,hbe4678,hbe4678,,,0
3724,12459905,14517,6816186,13330,1,100,N,N,N,CP_Units,TT_Task,DT_FixedDUR2,RV_OK,TK_Complete,EK000MJ75B,Develop & Issue Design Data for ERW - MJ750,,,,0,0,0,0,72,0,0,0,,2005-05-31 08:00,2005-06-20 00:00,2007-01-09 08:01,2007-01-09 08:01,,2007-01-27 00:00,2007-01-27 00:00,,,2005-05-31 08:00,2005-06-10 17:00,,,,,PT_Normal,,,,,yib/bJVDS8+kvQK5L9XSxQ,,,,N,0,0,,,2007-02-01 02:43,2007-02-04 01:05,hbe4678,hbe4678,,,0
3725,12459906,14517,6816186,13330,1,100,N,N,N,CP_Units,TT_Task,DT_FixedDUR2,RV_OK,TK_Complete,EK000ML43F,Develop & Issue Inquiry for ERW - ML430,,,,0,0,0,0,120,0,0,0,,2005-07-01 00:00,2005-07-07 00:00,2007-03-07 08:01,2007-03-07 08:01,,2007-01-27 00:00,2007-01-27 00:00,,,2005-06-27 08:00,2005-07-19 17:00,,,,,PT_Normal,,,,,F3Gb5707RhW4oQKULivH6A,,,,N,0,0,,,2007-02-01 02:43,2007-02-04 01:05,hbe4678,hbe4678,,,0
3726,12459907,14517,6816186,13330,1,100,N,N,N,CP_Units,TT_Task,DT_FixedDUR2,RV_OK,TK_Complete,EK000MJ37S,Develop & Issue Design Data for ERW - MJ307,,,,0,0,0,0,40,0,0,0,,2005-12-12 00:00,2005-12-16 00:00,2007-11-15 08:01,2007-11-15 08:01,,2007-01-27 00:00,2007-01-27 00:00,,,2006-01-23 08:00,2006-01-27 17:00,,,,,PT_Normal,,,,,qrK7I1p0RzuthZnNPpfYmQ,70x05OvYN02dGYaOXJPKZR,,,N,0,0,,,2007-02-01 02:43,2007-02-04 01:05,hbe4678,hbe4678,,,0
3727,12459908,14517,6816186,13330,1,100,N,N,N,CP_Units,TT_Task,DT_FixedDUR2,RV_OK,TK_Complete,EK000MJ37C,Prepare & Issue Purchase ERW - MJ307,,,,0,0,0,0,88,0,0,0,,2006-02-17 00:00,2006-02-20 00:00,2007-11-15 08:01,2007-11-15 08:01,,2007-01-27 00:00,2007-01-27 00:00,,,2006-02-01 08:00,2006-02-15 17:00,,,,,PT_Normal,,,,,phXVja0lSRyfIdGtk6VjVw,UlYA4f1uNEKkAjqQUOd+nh,,,N,0,0,,,2007-02-01 02:43,2007-02-04 01:05,hbe4678,hbe4678,,,0
3728,12459909,14517,6816186,13330,1,100,N,N,N,CP_Units,TT_Task,DT_FixedDUR2,RV_OK,TK_Complete,EK000MJ37T,Update/Issue Formal Inquiry for ERW - MJ307,,,,0,0,0,0,88,0,0,0,,2005-12-19 00:00,2005-12-27 00:00,2007-11-15 08:01,2007-11-15 08:01,,2007-01-27 00:00,2007-01-27 00:00,,,2006-01-17 08:00,2006-01-31 17:00,,,,,PT_Normal,,,,,LuQTtCr7Qfqy1n8Tx5IqZw,sTlbeiSs/E+KPPC3S96VRR,,,N,0,0,,,2007-02-01 02:43,2007-02-04 01:05,hbe4678,hbe4678,,,0
3729,12459910,14517,6816186,13330,1,100,N,N,N,CP_Units,TT_Task,DT_FixedDUR2,RV_OK,TK_Complete,EK000MU21E,Prepare & Issue Purchase ERW - MU221,,,,0,0,0,0,24,0,0,0,,2005-12-05 08:00,2005-12-22 17:00,2007-07-08 17:00,2007-07-08 17:00,,2007-01-27 00:00,2007-01-27 00:00,,,2005-12-05 08:00,2005-12-07 17:00,,,,,PT_Normal,,,,,Tn2WOJvyThWte8bv3vw8mw,,,,N,0,0,,,2007-02-01 02:43,2007-02-04 01:05,hbe4678,hbe4678,,,0
3730,12459911,14517,6816186,13330,1,100,N,N,N,CP_Units,TT_Task,DT_FixedDUR2,RV_OK,TK_Complete,EK000MJ38S,Develop & Issue Design Data for ERW - MJ308,,,,0,0,0,0,40,0,0,0,,2005-12-12 00:00,2005-12-16 00:00,2007-01-09 08:01,2007-01-09 08:01,,2007-01-27 00:00,2007-01-27 00:00,,,2006-01-23 08:00,2006-01-27 17:00,,,,,PT_Normal,,,,,PCb1mjKoTQeW/dyc8asVwg,uD78IPTna0eldQaJ8Ho+7x,,,N,0,0,,,2007-02-01 02:43,2007-02-04 01:05,hbe4678,hbe4678,,,0
3731,12459912,14517,6816186,13330,1,100,N,N,N,CP_Units,TT_Task,DT_FixedDUR2,RV_OK,TK_Complete,EK000MJ38C,Prepare & Issue Purchase ERW - MJ308,,,,0,0,0,0,88,0,0,0,,2006-05-24 00:00,2006-06-13 17:00,2007-11-15 08:01,2007-11-15 08:01,,2007-01-27 00:00,2007-01-27 00:00,,,2006-05-22 08:00,2006-06-05 17:00,,,,,PT_Normal,,,,,bFn2XuhSR0eNwwWlQbu8uw,bqh41GyTfUWhnGf568MKyx,,,N,0,0,,,2007-02-01 02:43,2007-02-04 01:05,hbe4678,hbe4678,,,0
3732,12459913,14517,6816186,13330,1,100,N,N,N,CP_Units,TT_Task,DT_FixedDUR2,RV_OK,TK_Complete,EK000MJ38T,Update/Issue Formal Inquiry for ERW - MJ308,,,,0,0,0,0,88,0,0,0,,2006-03-27 08:00,2006-04-03 00:00,2007-01-09 08:01,2007-01-09 08:01,,2007-01-27 00:00,2007-01-27 00:00,,,2006-03-27 08:00,2006-04-10 17:00,,,,,PT_Normal,,,,,UZla5a75Q0OEHw3OXn6baA,YpoE1lG3p0u+TJarRB3R1B,,,N,0,0,,,2007-02-01 02:43,2007-02-04 01:05,hbe4678,hbe4678,,,0
3733,12459914,14517,6816186,4047,1,100,N,N,N,CP_Drtn,TT_Task,DT_FixedDUR2,RV_OK,TK_Complete,EK000MU25E,02G MU225 Prepare & Issue Purchase ERW,,,,0,0,0,0,24,0,0,0,,2006-05-01 08:00,2006-06-13 00:00,2007-11-26 08:00,2007-11-26 08:00,,2007-01-27 00:00,2007-01-27 00:00,,,2006-05-01 08:00,2006-05-03 17:00,,,,,PT_Normal,,,,,yUhfEpsgQ9y+hsbYwtY/4Q,,,,N,0,0,,,2007-02-01 02:43,2007-02-04 01:05,hbe4678,hbe4678,,,0
3734,12459915,14517,6816186,4047,1,100,N,N,N,CP_Drtn,TT_Task,DT_FixedDUR2,RV_OK,TK_Complete,EK000MU25D,02G MU225 Technical Evaluation,,,,0,0,0,0,40,0,0,0,,2006-02-28 00:00,2006-03-24 00:00,2007-06-07 08:01,2007-06-07 08:01,,2007-01-27 00:00,2007-01-27 00:00,,,2006-03-01 08:00,2006-03-07 17:00,,,,,PT_Normal,,,,,THEnT1lTQnyVUdmiE2ClBw,,,,N,0,0,,,2007-02-01 02:43,2007-02-04 01:05,hbe4678,hbe4678,,,0
3735,12459916,14517,6816186,4047,1,100,N,N,N,CP_Drtn,TT_Task,DT_FixedDUR2,RV_OK,TK_Complete,EK000MU25L,02G MU225 Define Chemical Treatment Requirements,,,,0,0,0,0,80,0,0,0,,2005-08-29 00:00,2005-09-09 00:00,2007-06-07 08:01,2007-06-07 08:01,,2007-01-27 00:00,2007-01-27 00:00,,,2006-02-27 08:00,2006-03-10 17:00,,,,,PT_Normal,,,,,zoJMzRe1TVGLIuGyf/qgDw,,,,N,0,0,,,2007-02-01 02:43,2007-02-04 01:05,hbe4678,hbe4678,,,0
3736,12459917,14517,6816186,4047,1,100,N,N,N,CP_Drtn,TT_Task,DT_FixedDUR2,RV_OK,TK_Complete,PK000MU11N,05B MU311 Recv. Planning V. Data,,,,0,0,0,0,160,0,0,0,,2006-03-16 00:00,2006-03-31 00:00,2007-05-08 08:01,2007-05-08 08:01,,2007-01-27 00:00,2007-01-27 00:00,,,2006-03-13 08:00,2006-04-07 17:00,,,,,PT_Normal,,,,,kFhivRgCRVO6aZGD+WSqRg,,,,N,0,0,,,2007-02-01 02:43,2007-02-04 01:05,hbe4678,hbe4678,,,0
3737,12459918,14517,6816186,4047,1,100,N,N,N,CP_Drtn,TT_Task,DT_FixedDUR2,RV_OK,TK_Complete,EK000MU11E,05B MU311 Prepare & Issue Purchase ERW,,,,0,0,0,0,24,0,0,0,,2006-03-13 08:00,2006-03-15 17:00,2007-12-04 08:01,2007-12-04 08:01,,2007-01-27 00:00,2007-01-27 00:00,,,2006-03-13 08:00,2006-03-15 17:00,,,,,PT_Normal,,,,,RfDEiEn1QMKVUmlhXq8Xvw,,,,N,0,0,,,2007-02-01 02:43,2007-02-04 01:05,hbe4678,hbe4678,,,0
3738,12459919,14517,6816186,4047,1,100,N,N,N,CP_Drtn,TT_Task,DT_FixedDUR2,RV_OK,TK_Complete,EK000MU11D,05B MU311 Technical Evaluation,,,,0,0,0,0,40,0,0,0,,2006-02-03 00:00,2006-03-03 17:00,2007-05-08 08:01,2007-05-08 08:01,,2007-01-27 00:00,2007-01-27 00:00,,,2006-02-23 08:00,2006-03-01 17:00,,,,,PT_Normal,,,,,hF6rJg1QQ12uFLPqLOhz/g,,,,N,0,0,,,2007-02-01 02:43,2007-02-04 01:05,hbe4678,hbe4678,,,0
3739,12459920,14517,6816186,4047,1,100,N,N,N,CP_Drtn,TT_Task,DT_FixedDUR2,RV_OK,TK_Complete,EK000MU11L,05B MU311 Define Chemical Treatment Requirements,,,,0,0,0,0,80,0,0,0,,2005-08-29 00:00,2005-09-09 00:00,2007-05-08 08:01,2007-05-08 08:01,,2007-01-27 00:00,2007-01-27 00:00,,,2006-02-27 08:00,2006-03-10 17:00,,,,,PT_Normal,,,,,4tND9G+8R8aiw89j4KfL3w,,,,N,0,0,,,2007-02-01 02:43,2007-02-04 01:05,hbe4678,hbe4678,,,0
3740,12459921,14517,6816186,4047,1,100,N,N,N,CP_Drtn,TT_Task,DT_FixedDUR2,RV_OK,TK_Complete,EK000MU32E,01D MU322 Prepare & Issue Purchase ERW,,,,0,0,0,0,24,0,0,0,,2006-05-01 00:00,2006-05-01 00:00,2007-05-08 08:01,2007-05-08 08:01,,2007-01-27 00:00,2007-01-27 00:00,,,2006-05-09 08:00,2006-05-11 17:00,,,,,PT_Normal,,,,,w6jQ7fvJQjuPy3YM3+Q3Hw,,,,N,0,0,,,2007-02-01 02:43,2007-02-04 01:05,hbe4678,hbe4678,,,0
3741,12459922,14517,6816186,13330,1,100,N,N,N,CP_Units,TT_Task,DT_FixedDUR2,RV_OK,TK_Complete,PK000MU33N,03E MU330  2001-U - Piping Conceptual V. Data,,,,0,0,0,0,160,0,0,0,,2005-11-30 00:00,2006-03-05 00:00,2007-04-04 08:01,2007-04-04 08:01,,2007-01-27 00:00,2007-01-27 00:00,,,2005-10-31 08:00,2005-11-25 17:00,,,,,PT_Normal,,,,,pYj3UuyvSweWrBjZiGCIug,,,,N,0,0,,,2007-02-01 02:43,2007-02-04 01:05,hbe4678,hbe4678,,,0
3742,12459923,14517,6816186,13330,1,100,N,N,N,CP_Units,TT_Task,DT_FixedDUR2,RV_OK,TK_Complete,PK000MU29N,Recv. Planning V. Data MU292,,,,0,0,0,0,160,0,0,0,,2006-04-19 00:00,2006-05-10 00:00,2007-05-07 08:00,2007-05-07 08:00,,2007-01-27 00:00,2007-01-27 00:00,,,2006-04-17 08:00,2006-05-12 17:00,,,,,PT_Normal,,,,,F75AINkfSDqSPVPq46d01g,,,,N,0,0,,,2007-02-01 02:43,2007-02-04 01:05,hbe4678,hbe4678,,,0
3743,12459924,14517,6816186,13330,1,100,N,N,N,CP_Units,TT_Task,DT_FixedDUR2,RV_OK,TK_Complete,PK000MU30N,Recv. Planning V. Data MU300 - EDR Unit,,,,0,0,0,0,280,0,0,0,,2005-12-20 00:00,2006-02-10 00:00,2007-03-07 08:01,2007-03-07 08:01,,2007-01-27 00:00,2007-01-27 00:00,,,2006-01-03 08:00,2006-02-20 17:00,,,,,PT_Normal,,,,,wUsc6B9VSyW7xxnnr4fNwg,,,,N,0,0,,,2007-02-01 02:43,2007-02-04 01:05,hbe4678,hbe4678,,,0
3744,12459925,14517,6816186,13330,1,100,N,N,N,CP_Units,TT_Task,DT_FixedDUR2,RV_OK,TK_Complete,PK000MU21N,Recv. Planning V. Data MU221,,,,0,0,0,0,160,0,0,0,,2005-10-02 00:00,2005-10-28 00:00,2007-01-10 08:00,2007-01-10 08:00,,2007-01-27 00:00,2007-01-27 00:00,,,2005-11-02 08:00,2005-11-29 17:00,,,,,PT_Normal,,,,,sBY6ryeaTvCn9GUBX2WGyg,,,,N,0,0,,,2007-02-01 02:43,2007-02-04 01:05,hbe4678,hbe4678,,,0
3745,12459926,14517,6816186,13330,1,100,N,N,N,CP_Units,TT_Task,DT_FixedDUR2,RV_OK,TK_Complete,PK000MU22N,Recv. Planning V. Data MU222,,,,0,0,0,0,160,0,0,0,,2005-10-03 00:00,2005-10-28 00:00,2007-03-07 08:01,2007-03-07 08:01,,2007-01-27 00:00,2007-01-27 00:00,,,2005-11-02 08:00,2005-11-29 17:00,,,,,PT_Normal,,,,,SB8FrEq5Qy6EvEYe59YsNg,,,,N,0,0,,,2007-02-01 02:43,2007-02-04 01:05,hbe4678,hbe4678,,,0
3746,12459927,14517,6816186,13330,1,100,N,N,N,CP_Units,TT_Task,DT_FixedDUR2,RV_OK,TK_Complete,PK000ML50N,Recv. Planning V. Data ML500,,,,0,0,0,0,160,0,0,0,,2006-03-01 00:00,2006-03-27 00:00,2007-04-02 08:00,2007-04-02 08:00,,2007-01-27 00:00,2007-01-27 00:00,,,2006-03-27 08:00,2006-04-21 17:00,,,,,PT_Normal,,,,,bbB8RrVWSJ66BBUmca9I1A,,,,N,0,0,,,2007-02-01 02:43,2007-02-04 01:05,hbe4678,hbe4678,,,0
3747,12459928,14517,6816186,13330,1,100,N,N,N,CP_Units,TT_Task,DT_FixedDUR2,RV_OK,TK_Complete,PK000ML51N,Recv. Planning V. Data ML512,,,,0,0,0,0,160,0,0,0,,2005-10-12 00:00,2005-10-28 00:00,2007-05-14 08:00,2007-05-14 08:00,,2007-01-27 00:00,2007-01-27 00:00,,,2005-10-17 08:00,2005-11-11 17:00,,,,,PT_Normal,,,,,LH2Pxpo7QUGnnEhZWe4CLQ,,,,N,0,0,,,2007-02-01 02:43,2007-02-04 01:05,hbe4678,hbe4678,,,0
3748,12459929,14517,6816186,13330,1,100,N,N,N,CP_Units,TT_Task,DT_FixedDUR2,RV_OK,TK_Complete,PK000ML43N,Recv. Planning V. Data ML430,,,,0,0,0,0,160,0,0,0,,2005-10-21 00:00,2005-12-02 00:00,2007-03-07 08:01,2007-03-07 08:01,,2007-01-27 00:00,2007-01-27 00:00,,,2005-11-04 08:00,2005-12-01 17:00,,,,,PT_Normal,,,,,Csd9JicoTBaAOLrxqCsnzg,,,,N,0,0,,,2007-02-01 02:43,2007-02-04 01:05,hbe4678,hbe4678,,,0
3749,12459930,14517,6816186,13330,1,100,N,N,N,CP_Units,TT_Task,DT_FixedDUR2,RV_OK,TK_Complete,PK000ML31N,Recv. Planning V. Data ML313,,,,0,0,0,0,160,0,0,0,,2005-09-09 00:00,2005-10-13 00:00,2007-04-01 08:01,2007-04-01 08:01,,2007-01-27 00:00,2007-01-27 00:00,,,2005-10-03 08:00,2005-10-28 17:00,,,,,PT_Normal,,,,,RA2fELvNRKSnwxEPHfTYzg,,,,N,0,0,,,2007-02-01 02:43,2007-02-04 01:05,hbe4678,hbe4678,,,0
3750,12459931,14517,6816186,13330,1,100,N,N,N,CP_Units,TT_Task,DT_FixedDUR2,RV_OK,TK_Complete,PK000ML33N,Recv. Planning V. Data ML330,,,,0,0,0,0,160,0,0,0,,2005-10-21 00:00,2005-10-28 00:00,2007-01-09 08:01,2007-01-09 08:01,,2007-01-27 00:00,2007-01-27 00:00,,,2005-10-20 08:00,2005-11-16 17:00,,,,,PT_Normal,,,,,5sjgC9ftT2ql3uMVzdcyNA,,,,N,0,0,,,2007-02-01 02:43,2007-02-04 01:05,hbe4678,hbe4678,,,0
3751,12459932,14517,6816186,13330,1,100,N,N,N,CP_Units,TT_Task,DT_FixedDUR2,RV_OK,TK_Complete,PK000ML42N,Recv. Planning V. Data ML420,,,,0,0,0,0,160,0,0,0,,2005-10-03 00:00,2005-10-27 00:00,2007-01-09 08:01,2007-01-09 08:01,,2007-01-27 00:00,2007-01-27 00:00,,,2005-11-11 08:00,2005-12-08 17:00,,,,,PT_Normal,,,,,TcvRTLFrSoWT18GIbsdHIg,,,,N,0,0,,,2007-02-01 02:43,2007-02-04 01:05,hbe4678,hbe4678,,,0
3752,12459933,14517,6816186,13330,1,100,N,N,N,CP_Units,TT_Task,DT_FixedDUR2,RV_OK,TK_Complete,PK000MJ73N,Recv. Planning V. Data MJ730,,,,0,0,0,0,160,0,0,0,,2005-10-03 00:00,2005-10-28 00:00,2007-06-06 08:01,2007-06-06 08:01,,2007-01-27 00:00,2007-01-27 00:00,,,2005-11-03 08:00,2005-11-30 17:00,,,,,PT_Normal,,,,,kh/x0jKPS/a8afuDHB7mig,,,,N,0,0,,,2007-02-01 02:43,2007-02-04 01:05,hbe4678,hbe4678,,,0
3753,12459934,14517,6816186,13330,1,100,N,N,N,CP_Units,TT_Task,DT_FixedDUR2,RV_OK,TK_Complete,PK000MJ75N,Recv. Planning V. Data MJ750,,,,0,0,0,0,160,0,0,0,,2005-09-09 00:00,2005-09-30 00:00,2007-05-03 08:01,2007-05-03 08:01,,2007-01-27 00:00,2007-01-27 00:00,,,2005-09-26 08:00,2005-10-21 17:00,,,,,PT_Normal,,,,,HYetEsX8Sj6Gk7Y78VM2Tg,,,,N,0,0,,,2007-02-01 02:43,2007-02-04 01:05,hbe4678,hbe4678,,,0
3754,12459935,14517,6816186,13330,1,100,N,N,N,CP_Units,TT_Task,DT_FixedDUR2,RV_OK,TK_Complete,PK000MJ37N,Recv. Planning V. Data MJ340,,,,0,0,0,0,160,0,0,0,,2005-10-03 00:00,2005-10-28 00:00,2007-03-07 08:01,2007-03-07 08:01,,2007-01-27 00:00,2007-01-27 00:00,,,2005-11-11 08:00,2005-12-08 17:00,,,,,PT_Normal,,,,,pg9Vv9blS7WeG0+GC3Be4Q,,,,N,0,0,,,2007-02-01 02:43,2007-02-04 01:05,hbe4678,hbe4678,,,0
3755,12459936,14517,6816186,13330,1,100,N,N,N,CP_Units,TT_Task,DT_FixedDUR2,RV_OK,TK_Complete,PK000MJ39N,Recv. Planning V. Data MJ391,,,,0,0,0,0,160,0,0,0,,2005-10-03 00:00,2005-10-28 00:00,2007-03-07 08:01,2007-03-07 08:01,,2007-01-27 00:00,2007-01-27 00:00,,,2005-11-04 08:00,2005-12-01 17:00,,,,,PT_Normal,,,,,/S3bvt/9TtKxk6yx21A0/w,,,,N,0,0,,,2007-02-01 02:43,2007-02-04 01:05,hbe4678,hbe4678,,,0
3756,12459937,14517,6816186,13330,1,100,N,N,N,CP_Units,TT_Task,DT_FixedDUR2,RV_OK,TK_Complete,PK000MJ34N,Recv. Planning V. Data MJ304,,,,0,0,0,0,160,0,0,0,,2005-10-03 00:00,2005-10-28 00:00,2007-03-07 08:01,2007-03-07 08:01,,2007-01-27 00:00,2007-01-27 00:00,,,2005-11-01 08:00,2005-11-28 17:00,,,,,PT_Normal,,,,,qkfFbhLaRnS95r3yFqyYgw,,,,N,0,0,,,2007-02-01 02:43,2007-02-04 01:05,hbe4678,hbe4678,,,0
3757,12459938,14517,6816186,13330,1,100,N,N,N,CP_Units,TT_Task,DT_FixedDUR2,RV_OK,TK_Complete,PK000MJ35N,Recv. Planning V. Data MJ305,,,,0,0,0,0,160,0,0,0,,2005-09-23 00:00,2005-10-28 00:00,2007-01-09 08:01,2007-01-09 08:01,,2007-01-27 00:00,2007-01-27 00:00,,,2005-10-17 08:00,2005-11-11 17:00,,,,,PT_Normal,,,,,01L29U3/TKmhXX/+3dKjKg,,,,N,0,0,,,2007-02-01 02:43,2007-02-04 01:05,hbe4678,hbe4678,,,0
3758,12459939,14517,6816186,13330,1,100,N,N,N,CP_Units,TT_Task,DT_FixedDUR2,RV_OK,TK_Complete,PK000MJ36N,Recv. Planning V. Data MJ306,,,,0,0,0,0,160,0,0,0,,2005-09-23 00:00,2005-10-28 00:00,2007-01-09 08:01,2007-01-09 08:01,,2007-01-27 00:00,2007-01-27 00:00,,,2005-10-17 08:00,2005-11-11 17:00,,,,,PT_Normal,,,,,RsazWyHrQ/KhuxTJIxkQIQ,,,,N,0,0,,,2007-02-01 02:43,2007-02-04 01:05,hbe4678,hbe4678,,,0
3759,12459940,14517,6816186,13330,1,100,N,N,N,CP_Units,TT_Task,DT_FixedDUR2,RV_OK,TK_Complete,PK000MJ32N,Recv. Planning V. Data MJ302,,,,0,0,0,0,160,0,0,0,,2005-10-03 00:00,2005-10-28 00:00,2007-01-09 08:01,2007-01-09 08:01,,2007-01-27 00:00,2007-01-27 00:00,,,2005-11-03 08:00,2005-11-30 17:00,,,,,PT_Normal,,,,,MghuLxwcRTyjN+SIfq3+uA,,,,N,0,0,,,2007-02-01 02:43,2007-02-04 01:05,hbe4678,hbe4678,,,0
3760,12459941,14517,6816186,13330,1,100,N,N,N,CP_Units,TT_Task,DT_FixedDUR2,RV_OK,TK_Complete,PK000MJ33N,Recv. Planning V. Data MJ303,,,,0,0,0,0,160,0,0,0,,2005-11-08 00:00,2006-01-26 00:00,2007-03-07 08:01,2007-03-07 08:01,,2007-01-27 00:00,2007-01-27 00:00,,,2005-11-10 08:00,2005-12-07 17:00,,,,,PT_Normal,,,,,lOh1s7etSciFaepGWniGgQ,,,,N,0,0,,,2007-02-01 02:43,2007-02-04 01:05,hbe4678,hbe4678,,,0
3761,12459942,14517,6816186,13330,1,100,N,N,N,CP_Units,TT_Task,DT_FixedDUR2,RV_OK,TK_Complete,PK000MU41N,Recv. Planning V. Data MU410,,,,0,0,0,0,160,0,0,0,,2005-10-17 08:00,2005-10-27 17:00,2007-03-07 08:01,2007-03-07 08:01,,2007-01-27 00:00,2007-01-27 00:00,,,2005-10-17 08:00,2005-11-11 17:00,,,,,PT_Normal,,,,,DN+N+5UxQXqqBMerIWWjFw,,,,N,0,0,,,2007-02-01 02:43,2007-02-04 01:05,hbe4678,hbe4678,,,0
3762,12459943,14517,6816186,13330,1,100,N,N,N,CP_Units,TT_Task,DT_FixedDUR2,RV_OK,TK_Complete,PK000MJ21N,Recv. Planning V. Data MJ202,,,,0,0,0,0,240,0,0,0,,2005-09-09 00:00,2005-09-30 00:00,2007-03-07 08:01,2007-03-07 08:01,,2007-01-27 00:00,2007-01-27 00:00,,,2005-09-26 08:00,2005-11-04 17:00,,,,,PT_Normal,,,,,54qXy0F5SDiNPZu/Tzy7Cw,,,,N,0,0,,,2007-02-01 02:43,2007-02-04 01:05,hbe4678,hbe4678,,,0
3763,12459944,14517,6816186,13330,1,100,N,N,N,CP_Units,TT_Task,DT_FixedDUR2,RV_OK,TK_Complete,PK000MJ22N,Recv. Planning V. Data MJ201,,,,0,0,0,0,240,0,0,0,,2005-10-06 00:00,2005-10-28 00:00,2007-03-07 08:01,2007-03-07 08:01,,2007-01-27 00:00,2007-01-27 00:00,,,2005-10-17 08:00,2005-11-25 17:00,,,,,PT_Normal,,,,,9l5oC+7RR6WLYetXvpF3OQ,,,,N,0,0,,,2007-02-01 02:43,2007-02-04 01:05,hbe4678,hbe4678,,,0
3764,12459945,14517,6816186,13330,1,100,N,N,N,CP_Units,TT_Task,DT_FixedDUR2,RV_OK,TK_Complete,PK000MJ31N,Recv. Planning V. Data MJ301,,,,0,0,0,0,240,0,0,0,,2005-10-07 00:00,2005-10-28 00:00,2007-03-07 08:01,2007-03-07 08:01,,2007-01-27 00:00,2007-01-27 00:00,,,2005-11-03 08:00,2005-12-14 17:00,,,,,PT_Normal,,,,,/uzXagM7T+6mZnifkeZM0A,,,,N,0,0,,,2007-02-01 02:43,2007-02-04 01:05,hbe4678,hbe4678,,,0
3765,12459946,14517,6816186,13330,1,100,N,N,N,CP_Units,TT_Task,DT_FixedDUR2,RV_OK,TK_Complete,EK000MJ34D,Technical Evaluation  - MJ304,,,,0,0,0,0,40,0,0,0,,2005-06-02 00:00,2005-06-03 00:00,2007-11-02 17:00,2007-11-02 17:00,,2007-01-27 00:00,2007-01-27 00:00,,,2005-06-24 08:00,2005-06-30 17:00,,,,,PT_Normal,,,,,/43Kyn56SUWxUnz04pOjlQ,,,,N,0,0,,,2007-02-01 02:43,2007-02-04 01:05,hbe4678,hbe4678,,,0
3766,12459947,14517,6816186,13330,1,100,N,N,N,CP_Units,TT_Task,DT_FixedDUR2,RV_OK,TK_Complete,EK000MJ34E,Prepare & Issue Final Data Shts - MJ304,,,,0,0,0,0,128,0,0,0,,2005-10-21 08:00,2005-12-09 00:00,2007-11-02 17:00,2007-11-02 17:00,,2007-01-27 00:00,2007-01-27 00:00,,,2005-10-21 08:00,2005-11-11 17:00,,,,,PT_Normal,,,,,F7i62hqFS6iyPgq1f9DfSQ,,,,N,0,0,,,2007-02-01 02:43,2007-02-04 01:05,hbe4678,hbe4678,,,0
3767,12459948,14517,6816186,13330,1,100,N,N,N,CP_Units,TT_Task,DT_FixedDUR2,RV_OK,TK_Complete,EK000MJ34F,Update/Issue Formal Inquiry for ERW - MJ304,,,,0,0,0,0,120,0,0,0,,2005-05-10 00:00,2005-05-26 17:00,2006-12-25 08:00,2006-12-25 08:00,,2007-01-27 00:00,2007-01-27 00:00,,,2005-05-20 08:00,2005-06-10 17:00,,,,,PT_Normal,,,,,Z5+cMx02RgumokFP22a1iA,,,,N,0,0,,,2007-02-01 02:43,2007-02-04 01:05,hbe4678,hbe4678,,,0
3768,12459949,14517,6816186,13330,1,100,N,N,N,CP_Units,TT_Task,DT_FixedDUR2,RV_OK,TK_Complete,EK000MJ35B,Develop & Issue Design Data for ERW - MJ305,,,,0,0,0,0,40,0,0,0,,2005-05-05 08:00,2005-06-08 17:00,2007-02-07 08:01,2007-02-07 08:01,,2007-01-27 00:00,2007-01-27 00:00,,,2005-05-05 08:00,2005-05-11 17:00,,,,,PT_Normal,,,,,lRVXPxHhQ8GQzuVR7VmfKQ,,,,N,0,0,,,2007-02-01 02:43,2007-02-04 01:05,hbe4678,hbe4678,,,0
3769,12459950,14517,6816186,13330,1,100,N,N,N,CP_Units,TT_Task,DT_FixedDUR2,RV_OK,TK_Complete,EK000MJ35C,Prepare & Issue Prelim. RFQ - MJ305 to Proc.,,,,0,,0,,80,,,0,,2005-03-21 08:00,2005-04-01 17:00,2007-08-30 08:00,2007-08-30 08:00,,2007-01-27 00:00,2007-01-27 00:00,,,2005-03-21 08:00,2005-04-01 17:00,,,,,PT_Normal,,,,,xwLlPc/vT6OEHUO+2EN54A,,,,N,,,,,2007-02-01 02:43,2007-02-04 01:05,hbe4678,hbe4678,,,0
3770,12459951,14517,6816186,13330,1,100,N,N,N,CP_Units,TT_Task,DT_FixedDUR2,RV_OK,TK_Complete,EK000MJ35E,Prepare & Issue Purchase ERW - MJ305,,,,0,0,0,0,88,0,0,0,,2005-10-14 00:00,2005-10-26 00:00,2007-08-30 08:00,2007-08-30 08:00,,2007-01-27 00:00,2007-01-27 00:00,,,2005-10-20 08:01,2005-11-04 08:01,,,,,PT_Normal,,,,,wJALI9EqSSy+x4u11vVLLQ,,,,N,0,0,,,2007-02-01 02:43,2007-02-04 01:05,hbe4678,hbe4678,,,0
3771,12459952,14517,6816186,13330,1,100,N,N,N,CP_Units,TT_Task,DT_FixedDUR2,RV_OK,TK_Complete,EK000MJ35F,Update/Issue Formal Inquiry for ERW - MJ305,,,,0,0,0,0,88,0,0,0,,2005-06-09 08:00,2005-06-23 17:00,2007-08-30 08:00,2007-08-30 08:00,,2007-01-27 00:00,2007-01-27 00:00,,,2005-06-09 08:00,2005-06-23 17:00,,,,,PT_Normal,,,,,bSvssQG5SLeAw9xmRYCNcw,,,,N,0,0,,,2007-02-01 02:43,2007-02-04 01:05,hbe4678,hbe4678,,,0
3772,12459953,14517,6816186,13330,1,100,N,N,N,CP_Units,TT_Task,DT_FixedDUR2,RV_OK,TK_Complete,EK000MJ005,"Prepare Machinery Specs (Motors, Pkg Equipment)",,,,0,,0,,240,,,0,,2005-03-07 08:00,2005-03-28 00:00,2006-12-25 08:00,2006-12-25 08:00,,2007-01-27 00:00,2007-01-27 00:00,,,2005-03-07 08:00,2005-04-15 17:00,,,,,PT_Normal,,,,,MPIoGR21R4K50AVAnw0woQ,,,,N,,,,,2007-02-01 02:43,2007-02-04 01:05,hbe4678,hbe4678,,,0
3773,12459954,14517,6816186,13330,1,100,N,N,N,CP_Units,TT_Task,DT_FixedDUR2,RV_OK,TK_Complete,EK000MJ21B,Develop & Issue Design Data for ERW - MJ202,,,,0,,0,,96,,,0,,2005-03-24 08:00,2005-04-06 17:00,2006-12-25 08:00,2006-12-25 08:00,,2007-01-27 00:00,2007-01-27 00:00,,,2005-03-24 08:00,2005-04-08 17:00,,,,,PT_Normal,,,,,YdjxlUUXR6O81URCrMwElQ,,,,N,,,,,2007-02-01 02:43,2007-02-04 01:05,hbe4678,hbe4678,,,0
3774,12459955,14517,6816186,13330,1,100,N,N,N,CP_Units,TT_Task,DT_FixedDUR2,RV_OK,TK_Complete,EK000MJ21C,Prepare & Issue Prelim. RFQ - MJ202 to Proc.,,,,0,,0,,8,,,0,,2005-03-22 08:00,2005-03-22 17:00,2006-12-25 08:00,2006-12-25 08:00,,2007-01-27 00:00,2007-01-27 00:00,,,2005-03-22 08:00,2005-03-22 17:00,,,,,PT_Normal,,,,,F81zzX+oTLOT0d6bEsgkVA,,,,N,,,,,2007-02-01 02:43,2007-02-04 01:05,hbe4678,hbe4678,,,0
3775,12459956,14517,6816186,13330,1,100,N,N,N,CP_Units,TT_Task,DT_FixedDUR2,RV_OK,TK_Complete,EK000MJ21D,Technical Evaluation  - MJ202,,,,0,,0,,40,,,0,,2005-04-04 08:00,2005-04-04 17:00,2006-12-25 08:00,2006-12-25 08:00,,2007-01-27 00:00,2007-01-27 00:00,,,2005-04-04 08:00,2005-04-08 17:00,,,,,PT_Normal,,,,,tUs3JZpgQO2cZLC+hb/Xog,,,,N,,,,,2007-02-01 02:43,2007-02-04 01:05,hbe4678,hbe4678,,,0
3776,12459957,14517,6816186,13330,1,100,N,N,N,CP_Units,TT_Task,DT_FixedDUR2,RV_OK,TK_Complete,EK000MJ21E,Prepare & Issue Purchase ERW - MJ202,,,,0,0,0,0,288,0,0,0,,2005-09-12 00:00,2005-09-30 00:00,2007-07-23 08:01,2007-07-23 08:01,,2007-01-27 00:00,2007-01-27 00:00,,,2005-09-26 08:00,2005-11-14 17:00,,,,,PT_Normal,,,,,EXWNFtl1QBC/M+Ohu/Sgmg,,,,N,0,0,,,2007-02-01 02:43,2007-02-04 01:05,hbe4678,hbe4678,,,0
3777,12459958,14517,6816186,13330,1,100,N,N,N,CP_Units,TT_Task,DT_FixedDUR2,RV_OK,TK_Complete,EK000MJ21F,Update/Issue Formal Inquiry for ERW - MJ202,,,,0,,0,,200,,,0,,2005-04-07 08:00,2005-04-12 17:00,2006-12-25 08:00,2006-12-25 08:00,,2007-01-27 00:00,2007-01-27 00:00,,,2005-04-07 08:00,2005-05-11 17:00,,,,,PT_Normal,,,,,58tWRsU8RQm5YopM0YX8ZA,,,,N,,,,,2007-02-01 02:43,2007-02-04 01:05,hbe4678,hbe4678,,,0
3778,12459959,14517,6816186,13330,1,100,N,N,N,CP_Units,TT_Task,DT_FixedDUR2,RV_OK,TK_Complete,EK000MJ22B,Develop & Issue Design Data for ERW - MJ201,,,,0,,0,,80,,,0,,2005-03-21 08:00,2005-03-25 17:00,2006-12-25 08:00,2006-12-25 08:00,,2007-01-27 00:00,2007-01-27 00:00,,,2005-03-21 08:00,2005-04-01 17:00,,,,,PT_Normal,,,,,EG+kr3dFRjeSjNTLE35a3g,,,,N,,,,,2007-02-01 02:43,2007-02-04 01:05,hbe4678,hbe4678,,,0
3779,12459960,14517,6816186,13330,1,100,N,N,N,CP_Units,TT_Task,DT_FixedDUR2,RV_OK,TK_Complete,EK000MJ22C,Prepare & Issue Prelim. RFQ - MJ201 to Proc.,,,,0,,0,,8,,,0,,2005-03-21 08:00,2005-03-21 17:00,2006-12-25 08:00,2006-12-25 08:00,,2007-01-27 00:00,2007-01-27 00:00,,,2005-03-21 08:00,2005-03-21 17:00,,,,,PT_Normal,,,,,K2wmmY/7Tni73IRWH1XGvQ,,,,N,,,,,2007-02-01 02:43,2007-02-04 01:05,hbe4678,hbe4678,,,0
3780,12459961,14517,6816186,13330,1,100,N,N,N,CP_Units,TT_Task,DT_FixedDUR2,RV_OK,TK_Complete,EK000MJ22D,Technical Evaluation  - MJ201,,,,0,,0,,40,,,0,,2005-04-15 08:00,2005-04-18 17:00,2007-06-12 08:01,2007-06-12 08:01,,2007-01-27 00:00,2007-01-27 00:00,,,2005-04-15 08:00,2005-04-21 17:00,,,,,PT_Normal,,,,,c8Nbzg2jScON/QunowcQGA,,,,N,,,,,2007-02-01 02:43,2007-02-04 01:05,hbe4678,hbe4678,,,0
3781,12459962,14517,6816186,13330,1,100,N,N,N,CP_Units,TT_Task,DT_FixedDUR2,RV_OK,TK_Complete,EK000MJ22E,Prepare & Issue Purchase ERW - MJ201,,,,0,0,0,0,208,0,0,0,,2005-10-14 00:00,2005-12-14 00:00,2007-06-12 08:01,2007-06-12 08:01,,2007-01-27 00:00,2007-01-27 00:00,,,2005-09-26 08:00,2005-10-31 17:00,,,,,PT_Normal,,,,,H/O1yuUqSTu0fiJ7Q3gYag,,,,N,0,0,,,2007-02-01 02:43,2007-02-04 01:05,hbe4678,hbe4678,,,0
3782,12459963,14517,6816186,13330,1,100,N,N,N,CP_Units,TT_Task,DT_FixedDUR2,RV_OK,TK_Complete,EK000MJ22F,Update/Issue Formal Inquiry for ERW - MJ201,,,,0,,0,,160,,,0,,2005-03-28 08:00,2005-04-08 17:00,2006-12-25 08:00,2006-12-25 08:00,,2007-01-27 00:00,2007-01-27 00:00,,,2005-03-28 08:00,2005-04-22 17:00,,,,,PT_Normal,,,,,GDY9BLhCQlen7rqyYGAW6Q,,,,N,,,,,2007-02-01 02:43,2007-02-04 01:05,hbe4678,hbe4678,,,0
3783,12459964,14517,6816186,13330,1,100,N,N,N,CP_Units,TT_Task,DT_FixedDUR2,RV_OK,TK_Complete,EK000MJ31B,Develop & Issue Design Data for ERW - MJ301,,,,0,0,0,,40,,0,0,,2005-04-07 08:00,2005-05-13 00:00,2007-03-07 08:01,2007-03-07 08:01,,2007-01-27 00:00,2007-01-27 00:00,,,2005-04-07 08:00,2005-04-13 17:00,,,,,PT_Normal,,,,,PTqIU4ZjTSqW21pyB5vTMQ,,,,N,0,0,,,2007-02-01 02:43,2007-02-04 01:05,hbe4678,hbe4678,,,0
3784,12459965,14517,6816186,13330,1,100,N,N,N,CP_Units,TT_Task,DT_FixedDUR2,RV_OK,TK_Complete,EK000MJ31C,Prepare & Issue Prelim. RFQ - MJ301 to Proc.,,,,0,,0,,40,,,0,,2005-03-15 08:00,2005-03-15 17:00,2007-03-07 08:01,2007-03-07 08:01,,2007-01-27 00:00,2007-01-27 00:00,,,2005-03-15 08:00,2005-03-21 17:00,,,,,PT_Normal,,,,,WYu6/k1TRPG43dl+OZGQIg,,,,N,,,,,2007-02-01 02:43,2007-02-04 01:05,hbe4678,hbe4678,,,0
3785,12459966,14517,6816186,13330,1,100,N,N,N,CP_Units,TT_Task,DT_FixedDUR2,RV_OK,TK_Complete,EK000MJ31D,Technical Evaluation  - MJ301,,,,0,0,0,0,120,0,0,0,,2005-05-13 00:00,2005-05-26 00:00,2007-03-07 08:01,2007-03-07 08:01,,2007-01-27 00:00,2007-01-27 00:00,,,2005-06-06 08:00,2005-06-24 17:00,,,,,PT_Normal,,,,,B07JDQiySm+AeqKYKjupWQ,,,,N,0,0,,,2007-02-01 02:43,2007-02-04 01:05,hbe4678,hbe4678,,,0
3786,12459967,14517,6816186,13330,1,100,N,N,N,CP_Units,TT_Task,DT_FixedDUR2,RV_OK,TK_Complete,PK000MU61N,Recv. Planning V. Data MU611,,,,0,0,0,0,160,0,0,0,,2005-10-03 08:00,2005-10-26 17:00,2007-03-07 08:01,2007-03-07 08:01,,2007-01-27 00:00,2007-01-27 00:00,,,2005-10-03 08:00,2005-10-28 17:00,,,,,PT_Normal,,,,,dBDo5gGHSWWlpfoIf5AL3Q,,,,N,0,0,,,2007-02-01 02:43,2007-02-04 01:05,hbe4678,hbe4678,,,0
3787,12459968,14517,6816186,13330,1,100,N,N,N,CP_Units,TT_Task,DT_FixedDUR2,RV_OK,TK_Complete,PK000MU35N,Recv. Planning V. Data MU350,,,,0,0,0,0,160,0,0,0,,2005-09-12 00:00,2005-10-27 17:00,2007-05-03 08:01,2007-05-03 08:01,,2007-01-27 00:00,2007-01-27 00:00,,,2005-09-26 08:00,2005-10-21 17:00,,,,,PT_Normal,,,,,DDa+N1HFSCa1M02XHLm+Mg,,,,N,0,0,,,2007-02-01 02:43,2007-02-04 01:05,hbe4678,hbe4678,,,0
3788,12459969,14517,6816186,13330,1,100,N,N,N,CP_Units,TT_Task,DT_FixedDUR2,RV_OK,TK_Complete,EK000MJ39B,Develop/Issue Load Sht & Design Data ERW - MJ391,,,,0,0,0,0,24,0,0,0,,2005-04-25 00:00,2005-04-29 00:00,2007-02-07 08:01,2007-02-07 08:01,,2007-01-27 00:00,2007-01-27 00:00,,,2005-05-23 08:00,2005-05-25 17:00,,,,,PT_Normal,,,,,7f2uM/nTRSSa5lONWxAw2g,,,,N,0,0,,,2007-02-01 02:43,2007-02-04 01:05,hbe4678,hbe4678,,,0
3789,12459970,14517,6816186,13330,1,100,N,N,N,CP_Units,TT_Task,DT_FixedDUR2,RV_OK,TK_Complete,EK000MJ39C,Prepare & Issue Prelim. RFQ - MJ391 to Proc.,,,,0,,0,,40,,,0,,2005-03-21 08:00,2005-04-08 17:00,2007-02-07 08:01,2007-02-07 08:01,,2007-01-27 00:00,2007-01-27 00:00,,,2005-03-21 08:00,2005-03-25 17:00,,,,,PT_Normal,,,,,bAaf+PP+QRG/saO+UxysxA,,,,N,,,,,2007-02-01 02:43,2007-02-04 01:05,hbe4678,hbe4678,,,0
3790,12459971,14517,6816186,13330,1,100,N,N,N,CP_Units,TT_Task,DT_FixedDUR2,RV_OK,TK_Complete,EK000MJ39D,Technical Evaluation  - MJ391,,,,0,0,0,0,40,0,0,0,,2005-08-24 08:00,2006-01-20 17:00,2007-02-07 08:01,2007-02-07 08:01,,2007-01-27 00:00,2007-01-27 00:00,,,2005-08-24 08:00,2005-08-30 17:00,,,,,PT_Normal,,,,,EExY9RA+SYOOnL3eSQNryg,,,,N,0,0,,,2007-02-01 02:43,2007-02-04 01:05,hbe4678,hbe4678,,,0
3791,12459972,14517,6816186,13330,1,100,N,N,N,CP_Units,TT_Task,DT_FixedDUR2,RV_OK,TK_Complete,EK000MJ39E,Prepare & Issue Purchase ERW - MJ391,,,,0,0,0,0,80,0,0,0,,2006-03-29 08:00,2006-05-10 00:00,2007-05-04 17:00,2007-05-04 17:00,,2007-01-27 00:00,2007-01-27 00:00,,,2006-03-29 08:00,2006-04-11 17:00,,,,,PT_Normal,,,,,7sUr217rTl25AdsWVRd9tA,,,,N,0,0,,,2007-02-01 02:43,2007-02-04 01:05,hbe4678,hbe4678,,,0
3792,12459973,14517,6816186,13330,1,100,N,N,N,CP_Units,TT_Task,DT_FixedDUR2,RV_OK,TK_Complete,EK000MJ39F,Update/Issue Formal Inquiry for ERW - MJ391,,,,0,0,0,0,120,0,0,0,,2005-05-02 00:00,2005-05-27 08:00,2007-02-07 08:01,2007-02-07 08:01,,2007-01-27 00:00,2007-01-27 00:00,,,2005-05-20 08:00,2005-06-10 17:00,,,,,PT_Normal,,,,,UQix2kb+TdKsZiMAVEB0uA,,,,N,0,0,,,2007-02-01 02:43,2007-02-04 01:05,hbe4678,hbe4678,,,0
3793,12459974,14517,6816186,13330,1,100,N,N,N,CP_Units,TT_Task,DT_FixedDUR2,RV_OK,TK_Complete,EK000MJ73B,Develop/Issue Load Sht & Design Data ERW - MJ730,,,,0,0,0,0,40,0,0,0,,2005-05-20 08:00,2005-05-31 00:00,2007-02-07 08:01,2007-02-07 08:01,,2007-01-27 00:00,2007-01-27 00:00,,,2005-05-20 08:00,2005-05-26 17:00,,,,,PT_Normal,,,,,/pVpIDyiR+akNdNCqg/YQw,,,,N,0,0,,,2007-02-01 02:43,2007-02-04 01:05,hbe4678,hbe4678,,,0
3794,12459975,14517,6816186,13330,1,100,N,N,N,CP_Units,TT_Task,DT_FixedDUR2,RV_OK,TK_Complete,EK000MJ73D,Technical Evaluation  - MJ730,,,,0,0,0,0,48,0,0,0,,2005-09-06 00:00,2005-10-17 00:00,2007-02-07 08:01,2007-02-07 08:01,,2007-01-27 00:00,2007-01-27 00:00,,,2005-10-28 08:00,2005-11-04 17:00,,,,,PT_Normal,,,,,pDzwblK3RQOiDypuPo+pEA,,,,N,0,0,,,2007-02-01 02:43,2007-02-04 01:05,hbe4678,hbe4678,,,0
3795,12459976,14517,6816186,13330,1,100,N,N,N,CP_Units,TT_Task,DT_FixedDUR2,RV_OK,TK_Complete,EK000MJ73E,Prepare & Issue Purchase ERW - MJ730,,,,0,0,0,0,64,0,0,0,,2005-12-19 08:00,2006-01-05 00:00,2007-07-02 08:01,2007-07-02 08:01,,2007-01-27 00:00,2007-01-27 00:00,,,2005-12-19 08:00,2005-12-29 17:00,,,,,PT_Normal,,,,,v1YQkiNFSYOfauiRKScctw,,,,N,0,0,,,2007-02-01 02:43,2007-02-04 01:05,hbe4678,hbe4678,,,0
3796,12459977,14517,6816186,13330,1,100,N,N,N,CP_Units,TT_Task,DT_FixedDUR2,RV_OK,TK_Complete,EK000MJ73F,Develop & Issue Inquiry for ERW - MJ730,,,,0,0,0,0,160,0,0,0,,2005-05-31 08:00,2005-07-13 00:00,2007-02-07 08:01,2007-02-07 08:01,,2007-01-27 00:00,2007-01-27 00:00,,,2005-05-31 08:00,2005-06-27 17:00,,,,,PT_Normal,,,,,QgK/KQN+Tw+ZXn6/Bz8scA,,,,N,0,0,,,2007-02-01 02:43,2007-02-04 01:05,hbe4678,hbe4678,,,0
3797,12459978,14517,6816186,13330,1,100,N,N,N,CP_Units,TT_Task,DT_FixedDUR2,RV_OK,TK_Complete,EK000MJ75D,Technical Evaluation  - MJ750,,,,0,0,0,0,40,0,0,0,,2005-06-29 00:00,2005-06-30 00:00,2007-01-09 08:01,2007-01-09 08:01,,2007-01-27 00:00,2007-01-27 00:00,,,2005-06-28 08:00,2005-07-06 17:00,,,,,PT_Normal,,,,,V7Car4ZMQYKYWsoDfAxuFw,,,,N,0,0,,,2007-02-01 02:43,2007-02-04 01:05,hbe4678,hbe4678,,,0
3798,12459979,14517,6816186,13330,1,100,N,N,N,CP_Units,TT_Task,DT_FixedDUR2,RV_OK,TK_Complete,EK000MJ75E,Prepare & Issue Purchase ERW - MJ750,,,,0,0,0,0,48,0,0,0,,2005-09-19 00:00,2005-10-28 17:00,2007-12-25 08:01,2007-12-25 08:01,,2007-01-27 00:00,2007-01-27 00:00,,,2005-09-12 08:00,2005-09-19 17:00,,,,,PT_Normal,,,,,KwaYWksxTSSmGBZY6gvaXQ,,,,N,0,0,,,2007-02-01 02:43,2007-02-04 01:05,hbe4678,hbe4678,,,0
3799,12459980,14517,6816186,13330,1,100,N,N,N,CP_Units,TT_Task,DT_FixedDUR2,RV_OK,TK_Complete,EK000MJ31E,Prepare & Issue Purchase ERW - MJ301,,,,0,0,0,0,88,0,0,0,,2005-11-07 08:00,2005-12-14 00:00,2007-10-24 17:00,2007-10-24 17:00,,2007-01-27 00:00,2007-01-27 00:00,,,2005-11-07 08:00,2005-11-21 17:00,,,,,PT_Normal,,,,,eJawrXGlR+OI9akU7kDJvw,,,,N,0,0,,,2007-02-01 02:43,2007-02-04 01:05,hbe4678,hbe4678,,,0
3800,12459981,14517,6816186,13330,1,100,N,N,N,CP_Units,TT_Task,DT_FixedDUR2,RV_OK,TK_Complete,EK000MJ31F,Update/Issue Formal Inquiry for ERW - MJ301,,,,0,0,0,0,120,0,0,0,,2005-05-27 08:00,2005-06-08 00:00,2007-03-07 08:01,2007-03-07 08:01,,2007-01-27 00:00,2007-01-27 00:00,,,2005-05-27 08:00,2005-06-17 17:00,,,,,PT_Normal,,,,,sAwbaIInRzeyhtIMwZNrGA,,,,N,0,0,,,2007-02-01 02:43,2007-02-04 01:05,hbe4678,hbe4678,,,0
3801,12459982,14517,6816186,13330,1,100,N,N,N,CP_Units,TT_Task,DT_FixedDUR2,RV_OK,TK_Complete,EK000MJ32B,Develop & Issue Design Data for ERW - MJ302,,,,0,0,0,,64,,0,0,,2005-04-20 08:00,2005-05-13 17:00,2007-01-09 08:01,2007-01-09 08:01,,2007-01-27 00:00,2007-01-27 00:00,,,2005-04-20 08:00,2005-04-29 17:00,,,,,PT_Normal,,,,,34yN1nYGRbeIOexqg+Udjw,,,,N,0,0,,,2007-02-01 02:43,2007-02-04 01:05,hbe4678,hbe4678,,,0
3802,12459983,14517,6816186,13330,1,100,N,N,N,CP_Units,TT_Task,DT_FixedDUR2,RV_OK,TK_Complete,EK000MJ32C,Prepare & Issue Prelim. RFQ - MJ302 to Proc.,,,,0,,0,,40,,,0,,2005-03-15 08:00,2005-03-15 17:00,2007-01-09 08:01,2007-01-09 08:01,,2007-01-27 00:00,2007-01-27 00:00,,,2005-03-15 08:00,2005-03-21 17:00,,,,,PT_Normal,,,,,tElxd+g+QTSMVth41ECWsQ,,,,N,,,,,2007-02-01 02:43,2007-02-04 01:05,hbe4678,hbe4678,,,0
3803,12459984,14517,6816186,13330,1,100,N,N,N,CP_Units,TT_Task,DT_FixedDUR2,RV_OK,TK_Complete,EK000MJ32D,Technical Evaluation  - MJ302,,,,0,0,0,0,120,0,0,0,,2005-05-13 00:00,2005-05-20 00:00,2007-01-09 08:01,2007-01-09 08:01,,2007-01-27 00:00,2007-01-27 00:00,,,2005-06-06 08:00,2005-06-24 17:00,,,,,PT_Normal,,,,,Vkv3Pp96TYGEPx0/cCg+Vg,,,,N,0,0,,,2007-02-01 02:43,2007-02-04 01:05,hbe4678,hbe4678,,,0
3804,12459985,14517,6816186,13330,1,100,N,N,N,CP_Units,TT_Task,DT_FixedDUR2,RV_OK,TK_Complete,EK000MJ32E,Prepare & Issue Purchase ERW - MJ302,,,,0,0,0,0,88,0,0,0,,2005-10-20 08:01,2005-12-14 00:00,2007-10-19 17:00,2007-10-19 17:00,,2007-01-27 00:00,2007-01-27 00:00,,,2005-10-20 08:01,2005-11-04 08:01,,,,,PT_Normal,,,,,BrHuw+5MTpKxebG/80RcDA,,,,N,0,0,,,2007-02-01 02:43,2007-02-04 01:05,hbe4678,hbe4678,,,0
3805,12459986,14517,6816186,13330,1,100,N,N,N,CP_Units,TT_Task,DT_FixedDUR2,RV_OK,TK_Complete,EK000MJ32F,Update/Issue Formal Inquiry for ERW - MJ302,,,,0,0,0,0,120,0,0,0,,2005-05-27 08:00,2005-06-28 17:00,2007-01-09 08:01,2007-01-09 08:01,,2007-01-27 00:00,2007-01-27 00:00,,,2005-05-27 08:00,2005-06-17 17:00,,,,,PT_Normal,,,,,lce4Y8VQRsy+UjHpyxSPZQ,,,,N,0,0,,,2007-02-01 02:43,2007-02-04 01:05,hbe4678,hbe4678,,,0
3806,12459987,14517,6816186,13330,1,100,N,N,N,CP_Units,TT_Task,DT_FixedDUR2,RV_OK,TK_Complete,EK000MJ33B,Develop/Issue Load Sht & Design Data ERW - MJ303,,,,0,0,0,0,24,0,0,0,,2005-05-12 00:00,2005-06-23 00:00,2007-03-07 08:00,2007-03-07 08:00,,2007-01-27 00:00,2007-01-27 00:00,,,2005-05-23 08:00,2005-05-25 17:00,,,,,PT_Normal,,,,,fuiPgwEbQj263zYyYXA4eg,,,,N,0,0,,,2007-02-01 02:43,2007-02-04 01:05,hbe4678,hbe4678,,,0
3807,12459988,14517,6816186,13330,1,100,N,N,N,CP_Units,TT_Task,DT_FixedDUR2,RV_OK,TK_Complete,EK000MJ33D,Technical Evaluation  - MJ303,,,,0,0,0,0,120,0,0,0,,2005-09-30 00:00,2006-01-19 00:00,2007-03-07 08:00,2007-03-07 08:00,,2007-01-27 00:00,2007-01-27 00:00,,,2005-10-21 08:01,2005-11-11 08:01,,,,,PT_Normal,,,,,f7c9P1F1Sc2CkXV8eglxiw,,,,N,0,0,,,2007-02-01 02:43,2007-02-04 01:05,hbe4678,hbe4678,,,0
3808,12459989,14517,6816186,13330,1,100,N,N,N,CP_Units,TT_Task,DT_FixedDUR2,RV_OK,TK_Complete,EK000MJ33E,Prepare & Issue Purchase ERW - MJ303,,,,0,0,0,0,88,0,0,0,,2006-01-19 00:00,2006-01-27 00:00,2007-05-08 17:00,2007-05-08 17:00,,2007-01-27 00:00,2007-01-27 00:00,,,2006-01-23 08:00,2006-02-06 17:00,,,,,PT_Normal,,,,,N4mY5KHRT4eTF172h8NYQw,,,,N,0,0,,,2007-02-01 02:43,2007-02-04 01:05,hbe4678,hbe4678,,,0
3809,12459990,14517,6816186,13330,1,100,N,N,N,CP_Units,TT_Task,DT_FixedDUR2,RV_OK,TK_Complete,EK000MJ33F,Develop & Issue Inquiry for ERW - MJ303,,,,0,0,0,0,112,0,0,0,,2005-06-27 08:00,2005-07-19 00:00,2007-03-07 08:00,2007-03-07 08:00,,2007-01-27 00:00,2007-01-27 00:00,,,2005-06-27 08:00,2005-07-18 17:00,,,,,PT_Normal,,,,,f3qZqeMhT4eMMcFI4EdUFg,,,,N,0,0,,,2007-02-01 02:43,2007-02-04 01:05,hbe4678,hbe4678,,,0
3810,12459991,14517,6816186,13330,1,100,N,N,N,CP_Units,TT_Task,DT_FixedDUR2,RV_OK,TK_Complete,EK000MJ34B,Develop/Issue Load Sht & Design Data ERW - MJ304,,,,0,0,0,0,40,0,0,0,,2005-05-02 00:00,2005-05-09 00:00,2006-12-25 08:00,2006-12-25 08:00,,2007-01-27 00:00,2007-01-27 00:00,,,2005-05-23 08:00,2005-05-27 17:00,,,,,PT_Normal,,,,,pLYoI57nQgyRI/TcVSKzmg,,,,N,0,0,,,2007-02-01 02:43,2007-02-04 01:05,hbe4678,hbe4678,,,0
3811,12459992,14517,6816186,13330,1,100,N,N,N,CP_Units,TT_Task,DT_FixedDUR2,RV_OK,TK_Complete,EK000MJ75F,Develop & Issue Inquiry for ERW - MJ750,,,,0,0,0,0,120,0,0,0,,2005-06-21 00:00,2005-06-28 00:00,2007-01-09 08:01,2007-01-09 08:01,,2007-01-27 00:00,2007-01-27 00:00,,,2005-06-03 08:00,2005-06-23 17:00,,,,,PT_Normal,,,,,i+24CNBORi+TS2aOlb2KCQ,,,,N,0,0,,,2007-02-01 02:43,2007-02-04 01:05,hbe4678,hbe4678,,,0
3812,12459993,14517,6816186,13330,1,100,N,N,N,CP_Units,TT_Task,DT_FixedDUR2,RV_OK,TK_Complete,EK000ML31C,Prepare & Issue Prelim. RFQ - ML313 to Proc.,,,,0,,0,,40,,,0,,2005-03-21 08:00,2005-03-25 17:00,2008-01-29 08:01,2008-01-29 08:01,,2007-01-27 00:00,2007-01-27 00:00,,,2005-03-21 08:00,2005-03-25 17:00,,,,,PT_Normal,,,,,UE/W9/FsQ5G1xCdKX7KesQ,,,,N,,,,,2007-02-01 02:43,2007-02-04 01:05,hbe4678,hbe4678,,,0
3813,12459994,14517,6816186,13330,1,100,N,N,N,CP_Units,TT_Task,DT_FixedDUR2,RV_OK,TK_Complete,EK000ML31D,Technical Evaluation  - ML313,,,,0,0,0,0,80,0,0,0,,2005-05-06 00:00,2005-05-20 00:00,2008-01-29 08:01,2008-01-29 08:01,,2007-01-27 00:00,2007-01-27 00:00,,,2005-05-10 08:00,2005-05-23 17:00,,,,,PT_Normal,,,,,Ov+anNQjTZi5FhAgwxPqfA,,,,N,0,0,,,2007-02-01 02:43,2007-02-04 01:05,hbe4678,hbe4678,,,0
3814,12459995,14517,6816186,13330,1,100,N,N,N,CP_Units,TT_Task,DT_FixedDUR2,RV_OK,TK_Complete,EK000ML31E,Prepare & Issue Purchase ERW - ML313,,,,0,0,0,0,80,0,0,0,,2005-11-08 00:00,2006-02-09 00:00,2008-01-29 08:01,2008-01-29 08:01,,2007-01-27 00:00,2007-01-27 00:00,,,2005-11-17 08:00,2005-11-30 17:00,,,,,PT_Normal,,,,,vtXWl8gDTNiw2AzFaO7sjg,,,,N,0,0,,,2007-02-01 02:43,2007-02-04 01:05,hbe4678,hbe4678,,,0
3815,12459996,14517,6816186,13330,1,100,N,N,N,CP_Units,TT_Task,DT_FixedDUR2,RV_OK,TK_Complete,EK000ML31F,Update/Issue Formal Inquiry for ERW - ML313,,,,0,,0,,120,,,0,,2005-04-15 08:00,2005-04-15 17:00,2007-04-01 08:01,2007-04-01 08:01,,2007-01-27 00:00,2007-01-27 00:00,,,2005-04-15 08:00,2005-05-05 17:00,,,,,PT_Normal,,,,,1ewHOjenTc2tWTwJXT5suA,,,,N,,,,,2007-02-01 02:43,2007-02-04 01:05,hbe4678,hbe4678,,,0
3816,12459997,14517,6816186,13330,1,100,N,N,N,CP_Units,TT_Task,DT_FixedDUR2,RV_OK,TK_Complete,EK000ML33D,Technical Evaluation  - ML330,,,,0,0,0,0,200,0,0,0,,2005-08-10 00:00,2005-09-22 17:00,2007-01-09 08:01,2007-01-09 08:01,,2007-01-27 00:00,2007-01-27 00:00,,,2005-08-29 08:00,2005-09-30 17:00,,,,,PT_Normal,,,,,Dg2rAvgcTnCUp3K6c4uJCQ,,,,N,0,0,,,2007-02-01 02:43,2007-02-04 01:05,hbe4678,hbe4678,,,0
3817,12459998,14517,6816186,13330,1,100,N,N,N,CP_Units,TT_Task,DT_FixedDUR2,RV_OK,TK_Complete,EK000ML33E,Prepare & Issue Purchase ERW - ML330,,,,0,0,0,0,80,0,0,0,,2005-10-17 08:00,2005-10-26 00:00,2008-01-26 08:01,2008-01-26 08:01,,2007-01-27 00:00,2007-01-27 00:00,,,2005-10-17 08:00,2005-10-28 17:00,,,,,PT_Normal,,,,,y3KdsGcUTFa0jT1f2JAN2w,,,,N,0,0,,,2007-02-01 02:43,2007-02-04 01:05,hbe4678,hbe4678,,,0
3818,12459999,14517,6816186,13330,1,100,N,N,N,CP_Units,TT_Task,DT_FixedDUR2,RV_OK,TK_Complete,EK000ML33F,Develop & Issue Inquiry for ERW - ML330,,,,0,0,0,0,120,0,0,0,,2005-05-27 08:00,2005-06-13 00:00,2007-01-09 08:01,2007-01-09 08:01,,2007-01-27 00:00,2007-01-27 00:00,,,2005-05-27 08:00,2005-06-17 17:00,,,,,PT_Normal,,,,,o2CKT0bTTWmI6X+O80BWrA,,,,N,0,0,,,2007-02-01 02:43,2007-02-04 01:05,hbe4678,hbe4678,,,0
3819,12460000,14517,6816186,13330,1,100,N,N,N,CP_Units,TT_Task,DT_FixedDUR2,RV_OK,TK_Complete,EK000ML42C,Prepare & Issue Prelim. RFQ - ML420 to Proc.,,,,0,,0,,40,,,0,,2005-04-04 08:00,2005-04-08 17:00,2007-11-03 08:01,2007-11-03 08:01,,2007-01-27 00:00,2007-01-27 00:00,,,2005-04-04 08:00,2005-04-08 17:00,,,,,PT_Normal,,,,,zzyxAlYiTjiKgMraZa923w,,,,N,,,,,2007-02-01 02:43,2007-02-04 01:05,hbe4678,hbe4678,,,0
3820,12460001,14517,6816186,13330,1,100,N,N,N,CP_Units,TT_Task,DT_FixedDUR2,RV_OK,TK_Complete,EK000ML42D,Technical Evaluation  - ML420,,,,0,0,0,0,16,0,0,0,,2005-05-10 00:00,2005-05-20 00:00,2007-11-03 08:01,2007-11-03 08:01,,2007-01-27 00:00,2007-01-27 00:00,,,2005-06-03 08:00,2005-06-06 17:00,,,,,PT_Normal,,,,,zdW9Ufq1TamT1CYNPfuHUQ,,,,N,0,0,,,2007-02-01 02:43,2007-02-04 01:05,hbe4678,hbe4678,,,0
3821,12460002,14517,6816186,13330,1,100,N,N,N,CP_Units,TT_Task,DT_FixedDUR2,RV_OK,TK_Complete,EK000ML42E,Prepare & Issue Purchase ERW - ML420,,,,0,0,0,0,88,0,0,0,,2005-11-01 00:00,2005-11-10 00:00,2007-11-03 08:01,2007-11-03 08:01,,2007-01-27 00:00,2007-01-27 00:00,,,2005-11-21 08:00,2005-12-05 17:00,,,,,PT_Normal,,,,,kV5KwHp+QLSkBLDltKj/1w,,,,N,0,0,,,2007-02-01 02:43,2007-02-04 01:05,hbe4678,hbe4678,,,0
3822,12460003,14517,6816186,13330,1,100,N,N,N,CP_Units,TT_Task,DT_FixedDUR2,RV_OK,TK_Complete,EK000ML42F,Update/Issue Formal Inquiry for ERW - ML420,,,,0,0,0,0,120,0,0,0,,2005-04-19 00:00,2005-05-25 00:00,2007-01-09 08:01,2007-01-09 08:01,,2007-01-27 00:00,2007-01-27 00:00,,,2005-06-03 08:00,2005-06-23 17:00,,,,,PT_Normal,,,,,M2jIEWgXTCSOgwkK2Ls0UQ,,,,N,0,0,,,2007-02-01 02:43,2007-02-04 01:05,hbe4678,hbe4678,,,0
3823,12460004,14517,6816186,13330,1,100,N,N,N,CP_Units,TT_Task,DT_FixedDUR2,RV_OK,TK_Complete,EK000ML43D,Technical Evaluation  - ML430,,,,0,0,0,0,88,0,0,0,,2005-08-10 00:00,2005-10-07 00:00,2007-03-07 08:01,2007-03-07 08:01,,2007-01-27 00:00,2007-01-27 00:00,,,2005-08-29 08:00,2005-09-12 17:00,,,,,PT_Normal,,,,,CsaDp4ZCQlyWrMg73MIHyg,,,,N,0,0,,,2007-02-01 02:43,2007-02-04 01:05,hbe4678,hbe4678,,,0
3824,12460005,14517,6816186,13330,1,100,N,N,N,CP_Units,TT_Task,DT_FixedDUR2,RV_OK,TK_Complete,EK000ML43E,Prepare & Issue Purchase ERW - ML430,,,,0,0,0,0,80,0,0,0,,2005-12-02 00:00,2005-12-08 00:00,2007-11-03 08:01,2007-11-03 08:01,,2007-01-27 00:00,2007-01-27 00:00,,,2005-12-05 08:00,2005-12-16 17:00,,,,,PT_Normal,,,,,+Wo2LWSKQkSdV2qX/FhKlA,,,,N,0,0,,,2007-02-01 02:43,2007-02-04 01:05,hbe4678,hbe4678,,,0
3825,12460006,14517,6816186,13330,1,100,N,N,N,CP_Units,TT_Task,DT_FixedDUR2,RV_OK,TK_Complete,EK000MJ36B,Develop/Issue Load Sht & Design Data ERW - MJ306,,,,0,0,0,0,24,0,0,0,,2005-05-27 08:00,2005-07-08 17:00,2007-05-04 17:00,2007-05-04 17:00,,2007-01-27 00:00,2007-01-27 00:00,,,2005-05-27 08:00,2005-06-01 17:00,,,,,PT_Normal,,,,,vL+rSrM0R7+YF7Y5tw9dag,,,,N,0,0,,,2007-02-01 02:43,2007-02-04 01:05,hbe4678,hbe4678,,,0
3826,12460007,14517,6816186,13330,1,100,N,N,N,CP_Units,TT_Task,DT_FixedDUR2,RV_OK,TK_Complete,EK000MJ36C,Prepare & Issue Prelim. RFQ - MJ306 to Proc.,,,,0,,0,,80,,,0,,2005-03-21 08:00,2005-04-01 17:00,2007-05-04 17:00,2007-05-04 17:00,,2007-01-27 00:00,2007-01-27 00:00,,,2005-03-21 08:00,2005-04-01 17:00,,,,,PT_Normal,,,,,tlZ5AaaUTVeabL19lMheog,,,,N,,,,,2007-02-01 02:43,2007-02-04 01:05,hbe4678,hbe4678,,,0
3827,12460008,14517,6816186,13330,1,100,N,N,N,CP_Units,TT_Task,DT_FixedDUR2,RV_OK,TK_Complete,EK000MJ36D,Technical Evaluation  - MJ306,,,,0,0,0,0,40,0,0,0,,2005-04-26 08:00,2005-05-02 17:00,2007-05-04 17:00,2007-05-04 17:00,,2007-01-27 00:00,2007-01-27 00:00,,,2005-04-26 08:00,2005-05-02 17:00,,,,,PT_Normal,,,,,lyCh1TmkQs+nV31KcvIHLA,,,,N,0,0,,,2007-02-01 02:43,2007-02-04 01:05,hbe4678,hbe4678,,,0
3828,12460009,14517,6816186,13330,1,100,N,N,N,CP_Units,TT_Task,DT_FixedDUR2,RV_OK,TK_Complete,EK000MJ36E,Prepare & Issue Purchase ERW - MJ306,,,,0,0,0,0,88,0,0,0,,2005-10-14 00:00,2005-10-25 17:00,2007-05-04 17:00,2007-05-04 17:00,,2007-01-27 00:00,2007-01-27 00:00,,,2005-10-20 08:01,2005-11-04 08:01,,,,,PT_Normal,,,,,EDbavyN7T1azcnzkg93FQA,,,,N,0,0,,,2007-02-01 02:43,2007-02-04 01:05,hbe4678,hbe4678,,,0
3829,12460010,14517,6816186,13330,1,100,N,N,N,CP_Units,TT_Task,DT_FixedDUR2,RV_OK,TK_Complete,EK000MJ36F,Update/Issue Formal Inquiry for ERW - MJ306,,,,0,0,0,0,120,0,0,0,,2005-06-27 08:00,2005-07-20 00:00,2007-05-04 17:00,2007-05-04 17:00,,2007-01-27 00:00,2007-01-27 00:00,,,2005-06-27 08:00,2005-07-19 17:00,,,,,PT_Normal,,,,,TBgOBHiSTNW82RMJieEELw,,,,N,0,0,,,2007-02-01 02:43,2007-02-04 01:05,hbe4678,hbe4678,,,0
3830,12460011,14517,6816186,13330,1,100,N,N,N,CP_Units,TT_Task,DT_FixedDUR2,RV_OK,TK_Complete,EK000MJ37B,Develop & Issue Design Data for ERW - MJ340,,,,0,0,0,0,40,0,0,0,,2005-05-20 00:00,2005-06-08 17:00,2007-02-07 08:01,2007-02-07 08:01,,2007-01-27 00:00,2007-01-27 00:00,,,2005-05-31 08:00,2005-06-06 17:00,,,,,PT_Normal,,,,,ZPjZUslETOi6LkbuplWJug,,,,N,0,0,,,2007-02-01 02:43,2007-02-04 01:05,hbe4678,hbe4678,,,0
3831,12460012,14517,6816186,13330,1,100,N,N,N,CP_Units,TT_Task,DT_FixedDUR2,RV_OK,TK_Complete,EK000MJ37D,Technical Evaluation  - MJ340,,,,0,0,0,0,40,0,0,0,,2005-08-24 00:00,2005-09-28 00:00,2007-02-07 08:01,2007-02-07 08:01,,2007-01-27 00:00,2007-01-27 00:00,,,2005-08-29 08:00,2005-09-02 17:00,,,,,PT_Normal,,,,,foRzleCqS7eSdUhgLmSJHA,,,,N,0,0,,,2007-02-01 02:43,2007-02-04 01:05,hbe4678,hbe4678,,,0
3832,12460013,14517,6816186,13330,1,100,N,N,N,CP_Units,TT_Task,DT_FixedDUR2,RV_OK,TK_Complete,EK000MJ37E,Prepare & Issue Purchase ERW - MJ340,,,,0,0,0,0,80,0,0,0,,2005-11-01 00:00,2005-11-16 00:00,2008-01-03 08:01,2008-01-03 08:01,,2007-01-27 00:00,2007-01-27 00:00,,,2005-11-25 08:00,2005-12-08 17:00,,,,,PT_Normal,,,,,ZTmLdrjvQgCA9xn0SN/Z/Q,,,,N,0,0,,,2007-02-01 02:43,2007-02-04 01:05,hbe4678,hbe4678,,,0
3833,12460014,14517,6816186,13330,1,100,N,N,N,CP_Units,TT_Task,DT_FixedDUR2,RV_OK,TK_Complete,EK000MJ37F,Develop & Issue Inquiry for ERW - MJ340,,,,0,0,0,0,120,0,0,0,,2005-06-09 00:00,2005-07-06 00:00,2007-02-07 08:01,2007-02-07 08:01,,2007-01-27 00:00,2007-01-27 00:00,,,2005-06-03 08:00,2005-06-23 17:00,,,,,PT_Normal,,,,,873Q2VHrROGPelwKdq7juw,,,,N,0,0,,,2007-02-01 02:43,2007-02-04 01:05,hbe4678,hbe4678,,,0
3834,12460015,14517,6816186,13330,1,100,N,N,N,CP_Units,TT_Task,DT_FixedDUR2,RV_OK,TK_Complete,EK000MU22E,Prepare & Issue Purchase ERW - MU222,,,,0,0,0,0,24,0,0,0,,2005-12-05 08:00,2005-12-22 17:00,2007-12-31 08:01,2007-12-31 08:01,,2007-01-27 00:00,2007-01-27 00:00,,,2005-12-05 08:00,2005-12-07 17:00,,,,,PT_Normal,,,,,UkX+9rLMQfCOX6e3uThIqQ,,,,N,0,0,,,2007-02-01 02:43,2007-02-04 01:05,hbe4678,hbe4678,,,0
3835,12460016,14517,6816186,13330,1,100,N,N,N,CP_Units,TT_Task,DT_FixedDUR2,RV_OK,TK_Complete,EK000MU22F,Develop & Issue Inquiry for ERW - MU222,,,,0,0,0,0,152,0,0,0,,2005-07-05 08:00,2005-07-27 00:00,2007-03-07 08:01,2007-03-07 08:01,,2007-01-27 00:00,2007-01-27 00:00,,,2005-07-05 08:00,2005-07-29 17:00,,,,,PT_Normal,,,,,2a3F9Gk8R4Oe5O5Hg4BZag,,,,N,0,0,,,2007-02-01 02:43,2007-02-04 01:05,hbe4678,hbe4678,,,0
3836,12460017,14517,6816186,13330,1,100,N,N,N,CP_Units,TT_Task,DT_FixedDUR2,RV_OK,TK_Complete,EK000MU29D,Technical Evaluation  - MU292,,,,0,0,0,0,40,0,0,0,,2006-02-20 00:00,2006-04-03 00:00,2007-05-07 08:00,2007-05-07 08:00,,2007-01-27 00:00,2007-01-27 00:00,,,2006-03-06 08:00,2006-03-10 17:00,,,,,PT_Normal,,,,,nxeGdS1/SQ+/oG1JYjRuZg,,,,N,0,0,,,2007-02-01 02:43,2007-02-04 01:05,hbe4678,hbe4678,,,0
3837,12460018,14517,6816186,13330,1,100,N,N,N,CP_Units,TT_Task,DT_FixedDUR2,RV_OK,TK_Complete,EK000MU29E,Prepare & Issue Purchase ERW - MU292,,,,0,0,0,0,24,0,0,0,,2006-04-24 00:00,2006-04-27 00:00,2007-10-29 08:01,2007-10-29 08:01,,2007-01-27 00:00,2007-01-27 00:00,,,2006-05-09 08:00,2006-05-11 17:00,,,,,PT_Normal,,,,,nEJrCVXISMaACuh7Hhw8yg,,,,N,0,0,,,2007-02-01 02:43,2007-02-04 01:05,hbe4678,hbe4678,,,0
3838,12460019,14517,6816186,13330,1,100,N,N,N,CP_Units,TT_Task,DT_FixedDUR2,RV_OK,TK_Complete,EK000MU29F,Develop & Issue Inquiry for ERW - MU292,,,,0,0,0,0,80,0,0,0,,2005-12-05 08:00,2005-12-23 17:00,2007-05-07 08:00,2007-05-07 08:00,,2007-01-27 00:00,2007-01-27 00:00,,,2005-12-05 08:00,2005-12-16 17:00,,,,,PT_Normal,,,,,a75joFqIR16wjaqoeKjigQ,,,,N,0,0,,,2007-02-01 02:43,2007-02-04 01:05,hbe4678,hbe4678,,,0
3839,12460020,14517,6816186,13330,1,100,N,N,N,CP_Units,TT_Task,DT_FixedDUR2,RV_OK,TK_Complete,EK000MU30D,Technical Evaluation  - MU300,,,,0,0,0,0,40,0,0,0,,2005-06-13 00:00,2005-10-28 00:00,2007-03-07 08:01,2007-03-07 08:01,,2007-01-27 00:00,2007-01-27 00:00,,,2005-06-06 08:00,2005-06-10 17:00,,,,,PT_Normal,,,,,42F5L+qQS2O0KW6k1RSBfQ,,,,N,0,0,,,2007-02-01 02:43,2007-02-04 01:05,hbe4678,hbe4678,,,0
3840,12460021,14517,6816186,13330,1,100,N,N,N,CP_Units,TT_Task,DT_FixedDUR2,RV_OK,TK_Complete,EK000MU30E,Prepare & Issue Purchase ERW - MU300,,,,0,0,0,0,160,0,0,0,,2005-10-31 08:00,2005-11-14 00:00,2007-05-15 08:01,2007-05-15 08:01,,2007-01-27 00:00,2007-01-27 00:00,,,2005-10-31 08:00,2005-11-25 17:00,,,,,PT_Normal,,,,,CVYzu0l5SuG8BPnzthl3gw,,,,N,0,0,,,2007-02-01 02:43,2007-02-04 01:05,hbe4678,hbe4678,,,0
3841,12460022,14517,6816186,13330,1,100,N,N,N,CP_Units,TT_Task,DT_FixedDUR2,RV_OK,TK_Complete,EK000MU30F,Develop & Issue Inquiry for ERW - MU300,,,,0,0,0,0,160,0,0,0,,2005-04-18 08:00,2005-04-25 17:00,2007-03-07 08:01,2007-03-07 08:01,,2007-01-27 00:00,2007-01-27 00:00,,,2005-04-18 08:00,2005-05-13 17:00,,,,,PT_Normal,,,,,plsjqO1ITACRhvzetC1uaw,,,,N,0,0,,,2007-02-01 02:43,2007-02-04 01:05,hbe4678,hbe4678,,,0
3842,12460023,14517,6816186,13330,1,100,N,N,N,CP_Units,TT_Task,DT_FixedDUR2,RV_OK,TK_Complete,EK000MU31D,Technical Evaluation  - MU310,,,,0,0,0,0,40,0,0,0,,2005-10-25 00:00,2005-10-31 00:00,2007-01-09 08:01,2007-01-09 08:01,,2007-01-27 00:00,2007-01-27 00:00,,,2005-12-05 08:00,2005-12-09 17:00,,,,,PT_Normal,,,,,Uyu5xtPkQlC7VylrB3cW+g,,,,N,0,0,,,2007-02-01 02:43,2007-02-04 01:05,hbe4678,hbe4678,,,0
3843,12460024,14517,6816186,13330,1,100,N,N,N,CP_Units,TT_Task,DT_FixedDUR2,RV_OK,TK_Complete,EK000MU31E,Prepare & Issue Purchase ERW - MU310,,,,0,0,0,0,24,0,0,0,,2005-11-04 00:00,2005-11-08 00:00,2007-01-09 08:01,2007-01-09 08:01,,2007-01-27 00:00,2007-01-27 00:00,,,2006-01-03 08:00,2006-01-05 17:00,,,,,PT_Normal,,,,,bSNFk7OQT16fRfKefy89GA,,,,N,0,0,,,2007-02-01 02:43,2007-02-04 01:05,hbe4678,hbe4678,,,0
3844,12460025,14517,6816186,13330,1,100,N,N,N,CP_Units,TT_Task,DT_FixedDUR2,RV_OK,TK_Complete,EK000MU33C,Prepare & Issue Prelim. RFQ - MU330 to Proc.,,,,0,,0,,40,,,0,,2005-04-04 08:00,2005-04-08 17:00,2007-01-09 08:01,2007-01-09 08:01,,2007-01-27 00:00,2007-01-27 00:00,,,2005-04-04 08:00,2005-04-08 17:00,,,,,PT_Normal,,,,,GMmYHMhAQYC0PO9+YItsjg,,,,N,,,,,2007-02-01 02:43,2007-02-04 01:05,hbe4678,hbe4678,,,0
3845,12460026,14517,6816186,13330,1,100,N,N,N,CP_Units,TT_Task,DT_FixedDUR2,RV_OK,TK_Complete,EK000MU33D,Technical Evaluation  - MU330,,,,0,0,0,0,152,0,0,0,,2005-07-05 00:00,2005-08-01 00:00,2007-01-09 08:01,2007-01-09 08:01,,2007-01-27 00:00,2007-01-27 00:00,,,2005-06-27 08:00,2005-07-25 17:00,,,,,PT_Normal,,,,,HccPBqCDSZWz2jA4mVvPNA,,,,N,0,0,,,2007-02-01 02:43,2007-02-04 01:05,hbe4678,hbe4678,,,0
3846,12460027,14517,6816186,13330,1,100,N,N,N,CP_Units,TT_Task,DT_FixedDUR2,RV_OK,TK_Complete,EK000MU33E,Prepare & Issue Purchase ERW - MU330,,,,0,0,0,0,160,0,0,0,,2005-10-21 08:01,2005-10-27 00:00,2007-07-03 08:01,2007-07-03 08:01,,2007-01-27 00:00,2007-01-27 00:00,,,2005-10-21 08:01,2005-11-18 08:01,,,,,PT_Normal,,,,,78ku5on4T2+TkNzpoAqLdA,,,,N,0,0,,,2007-02-01 02:43,2007-02-04 01:05,hbe4678,hbe4678,,,0
3847,12460028,14517,6816186,13330,1,100,N,N,N,CP_Units,TT_Task,DT_FixedDUR2,RV_OK,TK_Complete,EK000MU33F,Update/Issue Formal Inquiry for ERW - MU330,,,,0,0,0,0,104,0,0,0,,2005-04-25 08:00,2005-05-04 17:00,2007-01-09 08:01,2007-01-09 08:01,,2007-01-27 00:00,2007-01-27 00:00,,,2005-04-18 08:00,2005-05-04 17:00,,,,,PT_Normal,,,,,SNwkvDOwRHCqaBDM+pKo+g,,,,N,0,0,,,2007-02-01 02:43,2007-02-04 01:05,hbe4678,hbe4678,,,0
3848,12460029,14517,6816186,13330,1,100,N,N,N,CP_Units,TT_Task,DT_FixedDUR2,RV_OK,TK_Complete,EK000ML50C,Prepare & Issue Prelim. RFQ - ML500 to Proc.,,,,0,,0,,40,,,0,,2005-03-22 08:00,2005-03-28 17:00,2007-02-07 08:01,2007-02-07 08:01,,2007-01-27 00:00,2007-01-27 00:00,,,2005-03-22 08:00,2005-03-28 17:00,,,,,PT_Normal,,,,,5atUo3LJSvu9662YmuY+TA,,,,N,,,,,2007-02-01 02:43,2007-02-04 01:05,hbe4678,hbe4678,,,0
3849,12460030,14517,6816186,13330,1,100,N,N,N,CP_Units,TT_Task,DT_FixedDUR2,RV_OK,TK_Complete,EK000ML50D,Technical Evaluation  - ML500,,,,0,0,0,0,80,0,0,0,,2005-04-25 00:00,2005-05-27 08:00,2007-02-07 08:01,2007-02-07 08:01,,2007-01-27 00:00,2007-01-27 00:00,,,2005-05-09 08:00,2005-05-20 17:00,,,,,PT_Normal,,,,,OimgCXsAR6+1ocqgqJ4hIQ,,,,N,0,0,,,2007-02-01 02:43,2007-02-04 01:05,hbe4678,hbe4678,,,0
3850,12460031,14517,6816186,13330,1,100,N,N,N,CP_Units,TT_Task,DT_FixedDUR2,RV_OK,TK_Complete,EK000ML50E,Prepare & Issue Purchase ERW - ML500,,,,0,0,0,0,80,0,0,0,,2006-03-27 08:00,2006-04-07 17:00,2007-03-05 08:00,2007-03-05 08:00,,2007-01-27 00:00,2007-01-27 00:00,,,2006-03-27 08:00,2006-04-07 17:00,,,,,PT_Normal,,,,,d6a3G/2RS7ewY2NTe10quA,,,,N,0,0,,,2007-02-01 02:43,2007-02-04 01:05,hbe4678,hbe4678,,,0
3851,12460032,14517,6816186,13330,1,100,N,N,N,CP_Units,TT_Task,DT_FixedDUR2,RV_OK,TK_Complete,EK000ML50F,Update/Issue Formal Inquiry for ERW - ML500,,,,0,0,0,,160,,0,0,,2005-04-05 08:00,2005-05-27 08:00,2007-02-07 08:01,2007-02-07 08:01,,2007-01-27 00:00,2007-01-27 00:00,,,2005-04-05 08:00,2005-05-02 17:00,,,,,PT_Normal,,,,,MWUq5YunRk6vUz9gEUUahg,,,,N,0,0,,,2007-02-01 02:43,2007-02-04 01:05,hbe4678,hbe4678,,,0
3852,12460033,14517,6816186,13330,1,100,N,N,N,CP_Units,TT_Task,DT_FixedDUR2,RV_OK,TK_Complete,EK000ML51D,Technical Evaluation  - ML512,,,,0,0,0,0,88,0,0,0,,2005-08-29 08:00,2005-09-19 00:00,2007-02-07 08:01,2007-02-07 08:01,,2007-01-27 00:00,2007-01-27 00:00,,,2005-08-29 08:00,2005-09-12 17:00,,,,,PT_Normal,,,,,gDSdGr0QQEGvWvWQrexg+w,,,,N,0,0,,,2007-02-01 02:43,2007-02-04 01:05,hbe4678,hbe4678,,,0
3853,12460034,14517,6816186,13330,1,100,N,N,N,CP_Units,TT_Task,DT_FixedDUR2,RV_OK,TK_Complete,EK000ML51E,Prepare & Issue Purchase ERW - ML512,,,,0,0,0,0,88,0,0,0,,2005-10-12 00:00,2005-10-26 00:00,2007-12-04 08:01,2007-12-04 08:01,,2007-01-27 00:00,2007-01-27 00:00,,,2005-11-03 08:01,2005-11-18 08:01,,,,,PT_Normal,,,,,xWN9ohg/RRm4wV1X2bjacg,,,,N,0,0,,,2007-02-01 02:43,2007-02-04 01:05,hbe4678,hbe4678,,,0
3854,12460035,14517,6816186,13330,1,100,N,N,N,CP_Units,TT_Task,DT_FixedDUR2,RV_OK,TK_Complete,EK000ML51F,Develop & Issue Inquiry for ERW - ML512,,,,0,0,0,0,160,0,0,0,,2005-05-27 08:00,2005-06-01 00:00,2007-02-07 08:01,2007-02-07 08:01,,2007-01-27 00:00,2007-01-27 00:00,,,2005-05-27 08:00,2005-06-24 17:00,,,,,PT_Normal,,,,,YTWZ2FoVSriPz9wP4ko+5A,,,,N,0,0,,,2007-02-01 02:43,2007-02-04 01:05,hbe4678,hbe4678,,,0
3855,12460036,14517,6816186,13330,1,100,N,N,N,CP_Units,TT_Task,DT_FixedDUR2,RV_OK,TK_Complete,EK000MU21D,Technical Evaluation  - MU221,,,,0,0,0,0,72,0,0,0,,2005-08-29 08:00,2005-10-14 17:00,2007-01-10 08:00,2007-01-10 08:00,,2007-01-27 00:00,2007-01-27 00:00,,,2005-08-29 08:00,2005-09-08 17:00,,,,,PT_Normal,,,,,vPhPx+HJRBuCmLJWD2tn2g,,,,N,0,0,,,2007-02-01 02:43,2007-02-04 01:05,hbe4678,hbe4678,,,0
3856,12460037,14517,6816186,13330,1,100,N,N,N,CP_Units,TT_Task,DT_FixedDUR2,RV_OK,TK_Complete,EK000MU21F,Develop & Issue Inquiry for ERW - MU221,,,,0,0,0,0,152,0,0,0,,2005-07-27 00:00,2005-08-03 00:00,2007-01-10 08:00,2007-01-10 08:00,,2007-01-27 00:00,2007-01-27 00:00,,,2005-08-15 08:00,2005-09-08 17:00,,,,,PT_Normal,,,,,zL2K8XNpSZidopahLbKfEw,,,,N,0,0,,,2007-02-01 02:43,2007-02-04 01:05,hbe4678,hbe4678,,,0
3857,12460038,14517,6816186,13330,1,100,N,N,N,CP_Units,TT_Task,DT_FixedDUR2,RV_OK,TK_Complete,EK000MU35D,Technical Evaluation  - MU350,,,,0,0,0,0,80,0,0,0,,2005-05-09 00:00,2005-05-20 00:00,2007-12-04 08:01,2007-12-04 08:01,,2007-01-27 00:00,2007-01-27 00:00,,,2005-05-27 08:00,2005-06-10 17:00,,,,,PT_Normal,,,,,8dYhChXnR0OcHGJ6L0cqLQ,,,,N,0,0,,,2007-02-01 02:43,2007-02-04 01:05,hbe4678,hbe4678,,,0
3858,12460039,14517,6816186,13330,1,100,N,N,N,CP_Units,TT_Task,DT_FixedDUR2,RV_OK,TK_Complete,EK000MU35E,Prepare & Issue Purchase ERW - MU350,,,,0,0,0,0,160,0,0,0,,2005-09-01 00:00,2005-09-13 00:00,2007-12-04 08:01,2007-12-04 08:01,,2007-01-27 00:00,2007-01-27 00:00,,,2005-09-12 08:00,2005-10-07 17:00,,,,,PT_Normal,,,,,v5vnGUYtSP23u4NVy4hYMw,,,,N,0,0,,,2007-02-01 02:43,2007-02-04 01:05,hbe4678,hbe4678,,,0
3859,12460040,14517,6816186,13330,1,100,N,N,N,CP_Units,TT_Task,DT_FixedDUR2,RV_OK,TK_Complete,EK000MU35F,Update/Issue Formal Inquiry for ERW - MU350,,,,0,,0,,120,,,0,,2005-04-20 08:00,2005-04-21 17:00,2007-05-03 08:01,2007-05-03 08:01,,2007-01-27 00:00,2007-01-27 00:00,,,2005-04-20 08:00,2005-05-10 17:00,,,,,PT_Normal,,,,,QJZrMN3KSPqna/oKBTPC3w,,,,N,,,,,2007-02-01 02:43,2007-02-04 01:05,hbe4678,hbe4678,,,0
3860,12460041,14517,6816186,13330,1,100,N,N,N,CP_Units,TT_Task,DT_FixedDUR2,RV_OK,TK_Complete,EK000MU41D,Technical Evaluation  - MU410,,,,0,0,0,0,40,0,0,0,,2005-06-03 00:00,2005-07-29 00:00,2007-03-07 08:01,2007-03-07 08:01,,2007-01-27 00:00,2007-01-27 00:00,,,2005-05-27 08:00,2005-06-03 17:00,,,,,PT_Normal,,,,,04FPx1xhRTiSwRdApNDung,,,,N,0,0,,,2007-02-01 02:43,2007-02-04 01:05,hbe4678,hbe4678,,,0
3861,12460042,14517,6816186,13330,1,100,N,N,N,CP_Units,TT_Task,DT_FixedDUR2,RV_OK,TK_Complete,EK000MU41E,Prepare & Issue Purchase ERW - MU410,,,,0,0,0,0,40,0,0,0,,2005-10-03 08:00,2005-10-06 00:00,2007-03-07 08:01,2007-03-07 08:01,,2007-01-27 00:00,2007-01-27 00:00,,,2005-10-03 08:00,2005-10-07 17:00,,,,,PT_Normal,,,,,J8ppiqIAS8uRpIhU0kVs3g,,,,N,0,0,,,2007-02-01 02:43,2007-02-04 01:05,hbe4678,hbe4678,,,0
3862,12460043,14517,6816186,13330,1,100,N,N,N,CP_Units,TT_Task,DT_FixedDUR2,RV_OK,TK_Complete,EK000MU41F,Develop & Issue Inquiry for ERW - MU410,,,,0,,0,,160,,,0,,2005-04-11 08:00,2005-04-15 17:00,2007-03-07 08:01,2007-03-07 08:01,,2007-01-27 00:00,2007-01-27 00:00,,,2005-04-11 08:00,2005-05-06 17:00,,,,,PT_Normal,,,,,C9KlpahtSW+eAUnHsEC1zQ,,,,N,,,,,2007-02-01 02:43,2007-02-04 01:05,hbe4678,hbe4678,,,0
3863,12460044,14517,6816186,13330,1,100,N,N,N,CP_Units,TT_Task,DT_FixedDUR2,RV_OK,TK_Complete,EK000MU61D,Technical Evaluation  - MU611,,,,0,0,0,0,40,0,0,0,,2005-06-06 08:00,2005-07-21 00:00,2007-03-07 08:01,2007-03-07 08:01,,2007-01-27 00:00,2007-01-27 00:00,,,2005-06-06 08:00,2005-06-10 17:00,,,,,PT_Normal,,,,,gozE5f/oSR2cCTsgF/hVNQ,,,,N,0,0,,,2007-02-01 02:43,2007-02-04 01:05,hbe4678,hbe4678,,,0
3864,12460045,14517,6816186,13330,1,100,N,N,N,CP_Units,TT_Task,DT_FixedDUR2,RV_OK,TK_Complete,EK000MU61E,Prepare & Issue Purchase ERW - MU611,,,,0,0,0,0,160,0,0,0,,2005-09-12 08:00,2005-09-16 00:00,2007-03-07 08:01,2007-03-07 08:01,,2007-01-27 00:00,2007-01-27 00:00,,,2005-09-12 08:00,2005-10-07 17:00,,,,,PT_Normal,,,,,osgg8vtDSxKdX7oGAxnRvw,,,,N,0,0,,,2007-02-01 02:43,2007-02-04 01:05,hbe4678,hbe4678,,,0
3865,12460046,14517,6816186,13330,1,100,N,N,N,CP_Units,TT_Task,DT_FixedDUR2,RV_OK,TK_Complete,EK000MU61F,Develop & Issue Inquiry for ERW - MU611,,,,0,0,0,0,160,0,0,0,,2005-04-20 00:00,2005-04-25 00:00,2007-03-07 08:01,2007-03-07 08:01,,2007-01-27 00:00,2007-01-27 00:00,,,2005-05-16 08:00,2005-06-13 17:00,,,,,PT_Normal,,,,,iZYEZ70DQkGZL16nUkps8w,,,,N,0,0,,,2007-02-01 02:43,2007-02-04 01:05,hbe4678,hbe4678,,,0
3866,12460047,14517,6816186,13330,1,100,N,N,N,CP_Units,TT_Task,DT_FixedDUR2,RV_OK,TK_Complete,EK000MU22D,Technical Evaluation  - MU222,,,,0,0,0,0,40,0,0,0,,2005-08-22 00:00,2005-10-07 00:00,2007-03-07 08:01,2007-03-07 08:01,,2007-01-27 00:00,2007-01-27 00:00,,,2005-09-19 08:00,2005-09-23 17:00,,,,,PT_Normal,,,,,0TDg1CsaSj+i5Ie9y/NC4g,,,,N,0,0,,,2007-02-01 02:43,2007-02-04 01:05,hbe4678,hbe4678,,,0
3867,12460048,14517,6816187,13330,0,100,N,N,N,CP_Units,TT_FinMile,DT_FixedDrtn,RV_OK,TK_Complete,EK000PI200,Final Delta Piping Bulk Quanities for Purchase,,,,0,0,0,0,0,0,0,0,,2007-01-26 17:00,2007-01-26 17:00,2007-06-08 17:00,2007-06-08 17:00,,2007-02-02 17:00,2007-02-02 17:00,,,2007-01-26 17:00,2007-01-26 17:00,,,,,PT_Normal,,,,,xjC1UjtaSgy4YZCGmPuQKg,6Slrb1/kcUKL41Fu9/gLHB,,,N,0,0,,,2007-02-01 02:43,2007-02-04 01:05,hbe4678,hbe4678,,,0
3868,12460049,14517,6816187,13330,1,100,N,N,N,CP_Units,TT_Task,DT_FixedDUR2,RV_OK,TK_Complete,PK000PIA4C,Product Line Piping - Tech Evaluation,,,,0,0,0,0,80,0,0,0,,2005-07-08 00:00,2005-08-03 17:00,2007-12-11 08:01,2007-12-11 08:01,,2007-01-27 00:00,2007-01-27 00:00,,,2005-07-15 08:00,2005-07-28 17:00,,,,,PT_Normal,,,,,6QPLZvsfQjyYIeQqpj6dVg,EaNRK+RPVEu/mOwIOCjdHB,,,N,0,0,,,2007-02-01 02:43,2007-02-04 01:05,hbe4678,hbe4678,,,0
3869,12460050,14517,6816187,13330,1,100,N,N,N,CP_Units,TT_Task,DT_FixedDUR2,RV_OK,TK_Complete,PK000PTA0F,Engineered Pipe Supports - Planning V. Data,,,,0,0,0,0,160,0,0,0,,2005-09-14 00:00,2006-02-24 00:00,2007-04-19 08:00,2007-04-19 08:00,,2007-01-27 00:00,2007-01-27 00:00,,,2006-06-28 08:00,2006-07-25 17:00,,,,,PT_Normal,,,,,LBhcomeKSP655mBnUdwo/g,DjPTcuxeEkOHKEKfokh0tB,,,N,0,0,,,2007-02-01 02:43,2007-02-04 01:05,hbe4678,hbe4678,,,0
3870,12460051,14517,6816187,13330,1,100,N,N,N,CP_Units,TT_Task,DT_FixedDUR2,RV_OK,TK_Complete,EK000PI160,P&ID Area Break Mark-up,,,,0,,0,,80,,,0,,2005-03-21 08:00,2005-04-07 17:00,2009-02-15 08:01,2009-02-15 08:01,,2007-01-27 00:00,2007-01-27 00:00,,,2005-03-21 08:00,2005-04-01 17:00,,,,,PT_Normal,,,,,EW1tA0Z4R6WEY0aQ2L+aVg,,,,N,,,,,2007-02-01 02:43,2007-02-04 01:05,hbe4678,hbe4678,,,0
3871,12460052,14517,6816187,13330,1,100,N,N,N,CP_Units,TT_Task,DT_FixedDUR2,RV_OK,TK_Complete,EK000PI040,Prepare technology work plan - Piping Engr.,,,,0,,0,,120,,,0,,2005-03-14 08:00,2005-04-08 17:00,2009-02-15 08:01,2009-02-15 08:01,,2007-01-27 00:00,2007-01-27 00:00,,,2005-03-14 08:00,2005-04-01 17:00,,,,,PT_Normal,,,,,F/WesG2NTZqjXFA+9MUIcg,,,,N,,,,,2007-02-01 02:43,2007-02-04 01:05,hbe4678,hbe4678,,,0
3872,12460053,14517,6816187,13330,1,100,N,N,N,CP_Units,TT_Task,DT_FixedDUR2,RV_OK,TK_Complete,EK000PI051,Prepare P/Mech Support Details,,,,0,,0,,160,,,0,,2005-03-14 08:00,2005-04-14 17:00,2007-04-02 08:00,2007-04-02 08:00,,2007-01-27 00:00,2007-01-27 00:00,,,2005-03-14 08:00,2005-04-08 17:00,,,,,PT_Normal,,,,,wNm66l1+RLKn0rTDyT6YmA,,,,N,,,,,2007-02-01 02:43,2007-02-04 01:05,hbe4678,hbe4678,,,0
3873,12460054,14517,6816187,13330,1,100,N,N,N,CP_Units,TT_Task,DT_FixedDUR2,RV_OK,TK_Complete,EK000PI055,Prepare Object Engineering Work Instruction,,,,0,0,0,0,40,0,0,0,,2005-04-08 00:00,2005-04-15 00:00,2009-02-15 08:01,2009-02-15 08:01,,2007-01-27 00:00,2007-01-27 00:00,,,2005-04-25 08:00,2005-04-29 17:00,,,,,PT_Normal,,,,,ySQ2xqbbQRGqYW2srDlwXw,,,,N,0,0,,,2007-02-01 02:43,2007-02-04 01:05,hbe4678,hbe4678,,,0
3874,12460055,14517,6816187,13330,1,100,N,N,N,CP_Units,TT_Task,DT_FixedDUR2,RV_OK,TK_Complete,EK000PI060,Prepare Other Project Documentation,,,,0,,0,,120,,,0,,2005-03-14 08:00,2005-04-08 17:00,2009-02-15 08:01,2009-02-15 08:01,,2007-01-27 00:00,2007-01-27 00:00,,,2005-03-14 08:00,2005-04-01 17:00,,,,,PT_Normal,,,,,4WXUMdtIRMudAiRMqQ0GUg,,,,N,,,,,2007-02-01 02:43,2007-02-04 01:05,hbe4678,hbe4678,,,0
3875,12460056,14517,6816187,13330,1,100,N,N,N,CP_Units,TT_Task,DT_FixedDUR2,RV_OK,TK_Complete,EK000PI080,Develop Split of work,,,,0,,0,,120,,,0,,2005-02-28 08:00,2005-03-25 17:00,2009-02-15 08:01,2009-02-15 08:01,,2007-01-27 00:00,2007-01-27 00:00,,,2005-02-28 08:00,2005-03-18 17:00,,,,,PT_Normal,,,,,+rKcGlEIRjmzqJvCYe8hlQ,,,,N,,,,,2007-02-01 02:43,2007-02-04 01:05,hbe4678,hbe4678,,,0
3876,12460057,14517,6816187,13330,1,100,N,N,N,CP_Units,TT_Task,DT_FixedDUR2,RV_OK,TK_Complete,EK000PI085,Estimate/Schedule Review,,,,0,,0,,40,,,0,,2005-04-08 08:00,2005-04-14 17:00,2009-02-15 08:01,2009-02-15 08:01,,2007-01-27 00:00,2007-01-27 00:00,,,2005-04-08 08:00,2005-04-14 17:00,,,,,PT_Normal,,,,,3gCabTGxTWmhOVe/WoqCyA,,,,N,,,,,2007-02-01 02:43,2007-02-04 01:05,hbe4678,hbe4678,,,0
3877,12460058,14517,6816187,13330,1,100,N,N,N,CP_Units,TT_Task,DT_FixedDUR2,RV_OK,TK_Complete,EK000PI100,Critical Line List,,,,0,0,0,,120,,0,0,,2005-04-11 08:00,2005-05-06 17:00,2007-02-27 08:00,2007-02-27 08:00,,2007-01-27 00:00,2007-01-27 00:00,,,2005-04-11 08:00,2005-04-29 17:00,,,,,PT_Normal,,,,,BSApot7VQT2ndiQCexU5Bw,,,,N,0,0,,,2007-02-01 02:43,2007-02-04 01:05,hbe4678,hbe4678,,,0
3878,12460059,14517,6816187,13330,1,100,N,N,N,CP_Units,TT_Task,DT_FixedDUR2,RV_OK,TK_Complete,EK000PI105,Performance Test of Citrix for PDS w/MEC,,,,0,,0,,16,,,0,,2005-04-11 08:00,2005-04-11 17:00,2007-01-09 08:01,2007-01-09 08:01,,2007-01-27 00:00,2007-01-27 00:00,,,2005-04-11 08:00,2005-04-12 17:00,,,,,PT_Normal,,,,,Zv7+pDn+R4qpNrFd453PrQ,,,,N,,,,,2007-02-01 02:43,2007-02-04 01:05,hbe4678,hbe4678,,,0
3879,12460060,14517,6816187,13330,1,100,N,N,N,CP_Units,TT_Task,DT_FixedDUR2,RV_OK,TK_Complete,EK000PI110,Locate FMCL Documents,,,,0,,0,,64,,,0,,2005-03-16 08:00,2005-03-25 17:00,2009-02-15 08:01,2009-02-15 08:01,,2007-01-27 00:00,2007-01-27 00:00,,,2005-03-16 08:00,2005-03-25 17:00,,,,,PT_Normal,,,,,llOe/g3MTmGluTN0Kte8eA,,,,N,,,,,2007-02-01 02:43,2007-02-04 01:05,hbe4678,hbe4678,,,0
3880,12460061,14517,6816187,13330,1,100,N,N,N,CP_Units,TT_Task,DT_FixedDUR2,RV_OK,TK_Complete,EK000PI115,Develop Piping Class Index (IOPMC),,,,0,,0,,88,,,0,,2005-03-07 08:00,2005-04-12 17:00,2007-01-09 08:01,2007-01-09 08:01,,2007-01-27 00:00,2007-01-27 00:00,,,2005-03-07 08:00,2005-03-21 17:00,,,,,PT_Normal,,,,,AZ923rW6Q0aXSCraS1PrGg,,,,N,,,,,2007-02-01 02:43,2007-02-04 01:05,hbe4678,hbe4678,,,0
3881,12460062,14517,6816187,13330,1,100,N,N,N,CP_Units,TT_Task,DT_FixedDUR2,RV_OK,TK_Complete,EK000PI120,Identify priority pipe classes,,,,0,,0,,88,,,0,,2005-03-07 08:00,2005-03-22 17:00,2007-01-09 08:01,2007-01-09 08:01,,2007-01-27 00:00,2007-01-27 00:00,,,2005-03-07 08:00,2005-03-21 17:00,,,,,PT_Normal,,,,,EF3oeQ/uQ4mPRawUlc5Ibg,,,,N,,,,,2007-02-01 02:43,2007-02-04 01:05,hbe4678,hbe4678,,,0
3882,12460063,14517,6816187,13330,1,100,N,N,N,CP_Units,TT_Task,DT_FixedDUR2,RV_OK,TK_Complete,EK000PI125,Validate new plot layout (impacts on pipe stress,,,,0,0,0,,400,,0,0,,2005-04-01 08:00,2005-06-20 17:00,2007-02-27 08:00,2007-02-27 08:00,,2007-01-27 00:00,2007-01-27 00:00,,,2005-04-01 08:00,2005-06-10 17:00,,,,,PT_Normal,,,,,zGnVVp2OSa2UmQUJlrRK1A,,,,N,0,0,,,2007-02-01 02:43,2007-02-04 01:05,hbe4678,hbe4678,,,0
3883,12460064,14517,6816187,13330,1,100,N,N,N,CP_Units,TT_Task,DT_FixedDUR2,RV_OK,TK_Complete,EK000PI132,Develop Early Tech P-Class specs for Procurement,,,,0,0,0,,320,,0,0,,2005-03-07 08:00,2005-04-22 00:00,2007-02-27 08:00,2007-02-27 08:00,,2007-01-27 00:00,2007-01-27 00:00,,,2005-03-07 08:00,2005-04-29 17:00,,,,,PT_Normal,,,,,FWfiX9I1THuqYdGR/ksYwg,,,,N,0,0,,,2007-02-01 02:43,2007-02-04 01:05,hbe4678,hbe4678,,,0
3884,12460065,14517,6816187,13330,1,100,N,N,N,CP_Units,TT_Task,DT_FixedDUR2,RV_OK,TK_Complete,EK000PI131,Devlop Balance Tech P-Class specs for Procuremnt,,,,0,0,0,0,312,0,0,0,,2005-05-06 08:00,2005-06-24 17:00,2007-02-27 08:00,2007-02-27 08:00,,2007-01-27 00:00,2007-01-27 00:00,,,2005-05-06 08:00,2005-06-30 17:00,,,,,PT_Normal,,,,,OeGGqgfUSTKq9ICXKXYWAg,,,,N,0,0,,,2007-02-01 02:43,2007-02-04 01:05,hbe4678,hbe4678,,,0
3885,12460066,14517,6816187,13330,1,100,N,N,N,CP_Units,TT_Task,DT_FixedDUR2,RV_OK,TK_Complete,EK000PI133,Dvlp/Issue V-class specs & Standads for Procurmt,,,,0,0,0,,200,,0,0,,2005-03-28 08:00,2005-05-10 00:00,2007-02-27 08:00,2007-02-27 08:00,,2007-01-27 00:00,2007-01-27 00:00,,,2005-03-28 08:00,2005-04-29 17:00,,,,,PT_Normal,,,,,rEoRF+vlRP+p1B9ETvI1jQ,,,,N,0,0,,,2007-02-01 02:43,2007-02-04 01:05,hbe4678,hbe4678,,,0
3886,12460067,14517,6816187,13330,1,100,N,N,N,CP_Units,TT_Task,DT_FixedDUR2,RV_OK,TK_Complete,EK000PI005,"Locate Permanent Tie in pnts Gas, Wtr, Storm wtr",,,,0,,0,,120,,,0,,2005-03-28 08:00,2005-04-15 17:00,2007-01-09 08:01,2007-01-09 08:01,,2007-01-27 00:00,2007-01-27 00:00,,,2005-03-28 08:00,2005-04-15 17:00,,,,,PT_Normal,,,,,Altek0xUQp+PcO9sCECBQg,,,,N,,,,,2007-02-01 02:43,2007-02-04 01:05,hbe4678,hbe4678,,,0
3887,12460068,14517,6816187,13330,1,100,N,N,N,CP_Units,TT_Task,DT_FixedDUR2,RV_OK,TK_Complete,EK000PI020,Develop Piping Specs (Paper),,,,0,0,0,,520,,0,0,,2005-03-21 08:00,2005-06-27 17:00,2007-01-09 08:01,2007-01-09 08:01,,2007-01-27 00:00,2007-01-27 00:00,,,2005-03-21 08:00,2005-06-20 17:00,,,,,PT_Normal,,,,,QaYczQHzRDWmkPxkA1J0IA,,,,N,0,0,,,2007-02-01 02:43,2007-02-04 01:05,hbe4678,hbe4678,,,0
3888,12460069,14517,6816187,13330,1,100,N,N,N,CP_Units,TT_Task,DT_FixedDUR2,RV_OK,TK_Complete,PK000PTA0H,Engineered Pipe Supports - Production V. Data,,,,0,0,0,0,240,0,0,0,,2006-02-24 00:00,2006-03-01 00:00,2007-04-19 08:00,2007-04-19 08:00,,2007-01-27 00:00,2007-01-27 00:00,,,2006-03-27 08:00,2006-05-05 17:00,,,,,PT_Normal,,,,,W8RfuOzvRwyna/1SMmQ2aA,BePSjPo0GUuXFtqvatV7MR,,,N,0,0,,,2007-02-01 02:43,2007-02-04 01:05,hbe4678,hbe4678,,,0
3889,12460070,14517,6816187,13330,1,100,N,N,N,CP_Units,TT_Task,DT_FixedDUR2,RV_OK,TK_Complete,PK000PIA1C,Bulk Piping A/G & U/G - Tech Evaluation,,,,0,0,0,0,80,0,0,0,,2005-06-06 08:00,2005-07-22 00:00,2007-02-27 08:00,2007-02-27 08:00,,2007-01-27 00:00,2007-01-27 00:00,,,2005-06-06 08:00,2005-06-17 17:00,,,,,PT_Normal,,,,,+X4dKtTnQuG80YjRrvpCfA,xuD+hljwZEuvOer/ncvKHB,,,N,0,0,,,2007-02-01 02:43,2007-02-04 01:05,hbe4678,hbe4678,,,0
3890,12460071,14517,6816188,13330,1,100,N,N,N,CP_Units,TT_Task,DT_FixedDUR2,RV_OK,TK_Complete,EK000MF31A,Develop & Issue Load Sheets for ERW - MF301,,,,0,,0,,16,,,0,,2005-03-28 08:00,2005-03-28 17:00,2007-02-06 08:01,2007-02-06 08:01,,2007-01-27 00:00,2007-01-27 00:00,,,2005-03-28 08:00,2005-03-29 17:00,,,,,PT_Normal,,,,,wEXD53qASQmW1fnDn/jquA,,,,N,,,,,2007-02-01 02:43,2007-02-04 01:05,hbe4678,hbe4678,,,0
3891,12460072,14517,6816188,13330,1,100,N,N,N,CP_Units,TT_Task,DT_FixedDUR2,RV_OK,TK_Complete,EK000PR600,MD305 Merc. Removal Bed - Develop & Issue Load Sheets for ERW,,,,0,0,0,,16,,0,0,,2005-11-07 08:00,2005-11-09 00:00,2007-06-19 08:01,2007-06-19 08:01,,2007-01-27 00:00,2007-01-27 00:00,,,2005-11-07 08:00,2005-11-08 17:00,,,,,PT_Normal,,,,,4mKfJJkoSmW6qQ1MrTc9xA,EtuinajbzUOjMsg0zH0+bh,,,N,0,0,,,2007-02-01 02:43,2007-02-04 01:05,hbe4678,hbe4678,,,0
3892,12460073,14517,6816188,13330,1,100,N,N,N,CP_Units,TT_Task,DT_FixedDUR2,RV_OK,TK_Complete,EK000PR610,MD305 Merc. Removal Bed - Analytical Design,,,,0,0,0,0,40,0,0,0,,2005-11-10 00:00,2005-12-27 00:00,2007-06-19 08:01,2007-06-19 08:01,,2007-01-27 00:00,2007-01-27 00:00,,,2005-11-09 08:00,2005-11-15 17:00,,,,,PT_Normal,,,,,uXBYG3UBR2G8eRjZc/+F/Q,5zItEBnprEeGDO8tpsBgCh,,,N,0,0,,,2007-02-01 02:43,2007-02-04 01:05,hbe4678,hbe4678,,,0
3893,12460074,14517,6816188,13330,1,100,N,N,N,CP_Units,TT_Task,DT_FixedDUR2,RV_OK,TK_Complete,EK000MJ37R,Develop & Issue Load Sheets for ERW - MJ307,,,,0,0,0,,40,,0,0,,2005-12-05 00:00,2005-12-09 00:00,2007-11-15 08:01,2007-11-15 08:01,,2007-01-27 00:00,2007-01-27 00:00,,,2006-01-16 08:00,2006-01-20 17:00,,,,,PT_Normal,,,,,8z/0XbJSSpyolb5kgABX8A,oGHSEb2Ry0W1NRFovXTzeR,,,N,0,0,,,2007-02-01 02:43,2007-02-04 01:05,hbe4678,hbe4678,,,0
3894,12460075,14517,6816188,13330,1,100,N,N,N,CP_Units,TT_Task,DT_FixedDUR2,RV_OK,TK_Complete,EK000MJ38R,Develop & Issue Load Sheets for ERW - MJ308,,,,0,0,0,,40,,0,0,,2005-12-05 00:00,2005-12-09 00:00,2007-01-09 08:01,2007-01-09 08:01,,2007-01-27 00:00,2007-01-27 00:00,,,2006-01-16 08:00,2006-01-20 17:00,,,,,PT_Normal,,,,,AbvxuvhKQ9WyvuIePrYtyw,6ejaqGgCAUqPZ8eyl2jZWR,,,N,0,0,,,2007-02-01 02:43,2007-02-04 01:05,hbe4678,hbe4678,,,0
3895,12460076,14517,6816188,13330,1,100,N,N,N,CP_Units,TT_Task,DT_FixedDUR2,RV_OK,TK_Complete,EK000PR095,"Steam Balance - Startup, 103-J, Etc",,,,0,,0,,160,,,0,,2005-03-28 08:00,2005-04-01 17:00,2007-01-09 08:01,2007-01-09 08:01,,2007-01-27 00:00,2007-01-27 00:00,,,2005-03-28 08:00,2005-04-22 17:00,,,,,PT_Normal,,,,,pPwHNm2ER+OgbeWZ8dJgVQ,,,,N,,,,,2007-02-01 02:43,2007-02-04 01:05,hbe4678,hbe4678,,,0
3896,12460077,14517,6816188,13330,1,100,N,N,N,CP_Units,TT_Task,DT_FixedDUR2,RV_OK,TK_Complete,EK000MD34R,Develop Final Analytical Sktch for ERW - MD304,,,,0,,0,,80,,,0,,2005-04-08 08:00,2005-04-15 17:00,2007-04-15 08:01,2007-04-15 08:01,,2007-01-27 00:00,2007-01-27 00:00,,,2005-04-08 08:00,2005-04-21 17:00,,,,,PT_Normal,,,,,FanVTkIATDmcQpWv6qH0QA,,,,N,,,,,2007-02-01 02:43,2007-02-04 01:05,hbe4678,hbe4678,,,0
3897,12460078,14517,6816188,13330,1,100,N,N,N,CP_Units,TT_Task,DT_FixedDUR2,RV_OK,TK_Complete,EK000MD41A,Develop & Issue Load Sheets for ERW - MD401,,,,0,,0,,16,,,0,,2005-03-28 08:00,2005-03-29 17:00,2007-02-06 08:01,2007-02-06 08:01,,2007-01-27 00:00,2007-01-27 00:00,,,2005-03-28 08:00,2005-03-29 17:00,,,,,PT_Normal,,,,,7R9EhrT9Ru2trOTbo8EKHQ,,,,N,,,,,2007-02-01 02:43,2007-02-04 01:05,hbe4678,hbe4678,,,0
3898,12460079,14517,6816188,13330,1,100,N,N,N,CP_Units,TT_Task,DT_FixedDUR2,RV_OK,TK_Complete,EK000MD42A,Develop & Issue Load Sheets for ERW - MD402,,,,0,,0,,24,,,0,,2005-03-30 08:00,2005-03-31 17:00,2007-01-09 08:01,2007-01-09 08:01,,2007-01-27 00:00,2007-01-27 00:00,,,2005-03-30 08:00,2005-04-01 17:00,,,,,PT_Normal,,,,,XZR77xI4SLCZrQWVyZOQ/w,,,,N,,,,,2007-02-01 02:43,2007-02-04 01:05,hbe4678,hbe4678,,,0
3899,12460080,14517,6816188,13330,1,100,N,N,N,CP_Units,TT_Task,DT_FixedDUR2,RV_OK,TK_Complete,EK000MD43A,Develop & Issue Load Sheets for ERW - MD403,,,,0,,0,,16,,,0,,2005-03-21 08:00,2005-03-23 17:00,2007-02-06 08:01,2007-02-06 08:01,,2007-01-27 00:00,2007-01-27 00:00,,,2005-03-21 08:00,2005-03-22 17:00,,,,,PT_Normal,,,,,oRtWZ8IoRR6ZgpF4cZ/wsw,,,,N,,,,,2007-02-01 02:43,2007-02-04 01:05,hbe4678,hbe4678,,,0
3900,12460081,14517,6816188,13330,1,100,N,N,N,CP_Units,TT_Task,DT_FixedDUR2,RV_OK,TK_Complete,EK000MD22P,Confirm Analytical Design for ERW - MD202,,,,0,0,0,0,80,0,0,0,,2005-05-06 08:00,2005-05-16 00:00,2007-05-07 08:00,2007-05-07 08:00,,2007-01-27 00:00,2007-01-27 00:00,,,2005-05-06 08:00,2005-05-19 17:00,,,,,PT_Normal,,,,,Aj9mOmKfS2uRiZgOtawtNA,,,,N,0,0,,,2007-02-01 02:43,2007-02-04 01:05,hbe4678,hbe4678,,,0
3901,12460082,14517,6816188,13330,1,100,N,N,N,CP_Units,TT_Task,DT_FixedDUR2,RV_OK,TK_Complete,EK000MD31A,Develop & Issue Load Sheets for ERW - MD301,,,,0,,0,,16,,,0,,2005-03-28 08:00,2005-03-29 17:00,2007-01-09 08:01,2007-01-09 08:01,,2007-01-27 00:00,2007-01-27 00:00,,,2005-03-28 08:00,2005-03-29 17:00,,,,,PT_Normal,,,,,EWB9n6J5SqamA/4CjwJJTA,,,,N,,,,,2007-02-01 02:43,2007-02-04 01:05,hbe4678,hbe4678,,,0
3902,12460083,14517,6816188,13330,1,100,N,N,N,CP_Units,TT_Task,DT_FixedDUR2,RV_OK,TK_Complete,EK000MD31P,Confirm Analytical Design for ERW - MD301,,,,0,0,0,,80,,0,0,,2005-04-11 08:00,2005-04-29 00:00,2007-04-16 08:01,2007-04-16 08:01,,2007-01-27 00:00,2007-01-27 00:00,,,2005-04-11 08:00,2005-04-22 17:00,,,,,PT_Normal,,,,,l2yYQSe2RCevMTH5+jHLaA,,,,N,0,0,,,2007-02-01 02:43,2007-02-04 01:05,hbe4678,hbe4678,,,0
3903,12460084,14517,6816188,13330,1,100,N,N,N,CP_Units,TT_Task,DT_FixedDUR2,RV_OK,TK_Complete,EK000MD32A,Develop & Issue Load Sheets for ERW - MD302,,,,0,,0,,16,,,0,,2005-03-28 08:00,2005-03-29 17:00,2007-01-09 08:01,2007-01-09 08:01,,2007-01-27 00:00,2007-01-27 00:00,,,2005-03-28 08:00,2005-03-29 17:00,,,,,PT_Normal,,,,,R0uYAN2qShe0CGpuJnezCg,,,,N,,,,,2007-02-01 02:43,2007-02-04 01:05,hbe4678,hbe4678,,,0
3904,12460085,14517,6816188,13330,1,100,N,N,N,CP_Units,TT_Task,DT_FixedDUR2,RV_OK,TK_Complete,EK000MD32P,Confirm Analytical Design for ERW - MD302,,,,0,0,0,,80,,0,0,,2005-04-11 08:00,2005-05-03 00:00,2007-05-07 08:00,2007-05-07 08:00,,2007-01-27 00:00,2007-01-27 00:00,,,2005-04-11 08:00,2005-04-22 17:00,,,,,PT_Normal,,,,,JbIvBBX2RwCjJxPD8j9VZg,,,,N,0,0,,,2007-02-01 02:43,2007-02-04 01:05,hbe4678,hbe4678,,,0
3905,12460086,14517,6816188,13330,1,100,N,N,N,CP_Units,TT_Task,DT_FixedDUR2,RV_OK,TK_Complete,EK000MD33A,Develop & Issue Load Sheets for ERW - MD303,,,,0,,0,,24,,,0,,2005-03-16 08:00,2005-03-18 17:00,2007-04-09 08:01,2007-04-09 08:01,,2007-01-27 00:00,2007-01-27 00:00,,,2005-03-16 08:00,2005-03-18 17:00,,,,,PT_Normal,,,,,rIgj7AbZQEKw1O1G/xsAog,,,,N,,,,,2007-02-01 02:43,2007-02-04 01:05,hbe4678,hbe4678,,,0
3906,12460087,14517,6816188,13330,1,100,N,N,N,CP_Units,TT_Task,DT_FixedDUR2,RV_OK,TK_Complete,EK000MC63A,Develop & Issue Load Sheets for ERW - MC630,,,,0,0,0,,24,,0,0,,2005-04-19 08:00,2005-04-22 00:00,2006-12-25 08:00,2006-12-25 08:00,,2007-01-27 00:00,2007-01-27 00:00,,,2005-04-19 08:00,2005-04-21 17:00,,,,,PT_Normal,,,,,8ao5RadMQTuXW5ugRyFJcg,,,,N,0,0,,,2007-02-01 02:43,2007-02-04 01:05,hbe4678,hbe4678,,,0
3907,12460088,14517,6816188,13330,1,100,N,N,N,CP_Units,TT_Task,DT_FixedDUR2,RV_OK,TK_Complete,EK000MD21A,Develop & Issue Load Sheets for ERW - MD201,,,,0,,0,,16,,,0,,2005-03-21 08:00,2005-03-22 17:00,2006-12-25 08:00,2006-12-25 08:00,,2007-01-27 00:00,2007-01-27 00:00,,,2005-03-21 08:00,2005-03-22 17:00,,,,,PT_Normal,,,,,WJUWZ4yfTv+P2Jj/+JrklA,,,,N,,,,,2007-02-01 02:43,2007-02-04 01:05,hbe4678,hbe4678,,,0
3908,12460089,14517,6816188,13330,1,100,N,N,N,CP_Units,TT_Task,DT_FixedDUR2,RV_OK,TK_Complete,EK000MD21P,Develop Prelim Analytical Sktch for ERW - MD201,,,,0,,0,,48,,,0,,2005-03-24 08:00,2005-04-21 17:00,2007-01-09 08:01,2007-01-09 08:01,,2007-01-27 00:00,2007-01-27 00:00,,,2005-03-24 08:00,2005-03-31 17:00,,,,,PT_Normal,,,,,z9vnjsYfTZyCLoYmjiHmIg,,,,N,,,,,2007-02-01 02:43,2007-02-04 01:05,hbe4678,hbe4678,,,0
3909,12460090,14517,6816188,13330,1,100,N,N,N,CP_Units,TT_Task,DT_FixedDUR2,RV_OK,TK_Complete,EK000MD21Q,Develop Final Analytical Sktch for ERW - MD201,,,,0,0,0,,216,,0,0,,2005-03-24 08:00,2005-05-26 17:00,2007-01-09 08:01,2007-01-09 08:01,,2007-01-27 00:00,2007-01-27 00:00,,,2005-03-24 08:00,2005-04-29 17:00,,,,,PT_Normal,,,,,PRQi1g0wR+KKVo7bvRMDLQ,,,,N,0,0,,,2007-02-01 02:43,2007-02-04 01:05,hbe4678,hbe4678,,,0
3910,12460091,14517,6816188,13330,1,100,N,N,N,CP_Units,TT_Task,DT_FixedDUR2,RV_OK,TK_Complete,EK000MD22A,Develop & Issue Load Sheets for ERW - MD202,,,,0,,0,,16,,,0,,2005-04-05 08:00,2005-04-05 17:00,2007-05-07 08:00,2007-05-07 08:00,,2007-01-27 00:00,2007-01-27 00:00,,,2005-04-05 08:00,2005-04-06 17:00,,,,,PT_Normal,,,,,2MDAAY37R6uYQ6LwyOi57g,,,,N,,,,,2007-02-01 02:43,2007-02-04 01:05,hbe4678,hbe4678,,,0
3911,12460092,14517,6816188,13330,1,100,N,N,N,CP_Units,TT_Task,DT_FixedDUR2,RV_OK,TK_Complete,EK000MC31A,Develop & Issue Load Sheets for ERW - MC310,,,,0,,0,,24,,,0,,2005-03-29 08:00,2005-03-31 17:00,2006-12-25 08:00,2006-12-25 08:00,,2007-01-27 00:00,2007-01-27 00:00,,,2005-03-29 08:00,2005-03-31 17:00,,,,,PT_Normal,,,,,jnC8pP65Sz6+MWwDWcq30Q,,,,N,,,,,2007-02-01 02:43,2007-02-04 01:05,hbe4678,hbe4678,,,0
3912,12460093,14517,6816188,13330,1,100,N,N,N,CP_Units,TT_Task,DT_FixedDUR2,RV_OK,TK_Complete,EK000MC32A,Develop & Issue Load Sheets for ERW - MC311,,,,0,,0,,24,,,0,,2005-03-25 08:00,2005-03-30 17:00,2006-12-25 08:00,2006-12-25 08:00,,2007-01-27 00:00,2007-01-27 00:00,,,2005-03-25 08:00,2005-03-29 17:00,,,,,PT_Normal,,,,,qNDid3zKRVGsgpxBSqt+Jg,,,,N,,,,,2007-02-01 02:43,2007-02-04 01:05,hbe4678,hbe4678,,,0
3913,12460094,14517,6816188,13330,1,100,N,N,N,CP_Units,TT_Task,DT_FixedDUR2,RV_OK,TK_Complete,EK000MC61A,Develop & Issue Load Sheets for ERW - MC610,,,,0,,0,,24,,,0,,2005-04-08 08:00,2005-04-19 17:00,2006-12-25 08:00,2006-12-25 08:00,,2007-01-27 00:00,2007-01-27 00:00,,,2005-04-08 08:00,2005-04-12 17:00,,,,,PT_Normal,,,,,EXUWjVK3TfmsiJY73GgP0w,,,,N,,,,,2007-02-01 02:43,2007-02-04 01:05,hbe4678,hbe4678,,,0
3914,12460095,14517,6816188,13330,1,100,N,N,N,CP_Units,TT_Task,DT_FixedDUR2,RV_OK,TK_Complete,EK000MC21A,Develop & Issue Load Sheets for ERW - MC210,,,,0,,0,,24,,,0,,2005-04-04 08:00,2005-04-07 17:00,2006-12-25 08:00,2006-12-25 08:00,,2007-01-27 00:00,2007-01-27 00:00,,,2005-04-04 08:00,2005-04-06 17:00,,,,,PT_Normal,,,,,nQ/kAleXQZW7CQrC6/HUsQ,,,,N,,,,,2007-02-01 02:43,2007-02-04 01:05,hbe4678,hbe4678,,,0
3915,12460096,14517,6816188,13330,1,100,N,N,N,CP_Units,TT_Task,DT_FixedDUR2,RV_OK,TK_Complete,EK000MC23A,Develop & Issue Load Sheets for ERW - MC230,,,,0,0,0,,24,,0,0,,2005-04-04 08:00,2005-04-22 00:00,2006-12-25 08:00,2006-12-25 08:00,,2007-01-27 00:00,2007-01-27 00:00,,,2005-04-04 08:00,2005-04-06 17:00,,,,,PT_Normal,,,,,luxcga90Rb6b44XcOvmkxw,,,,N,0,0,,,2007-02-01 02:43,2007-02-04 01:05,hbe4678,hbe4678,,,0
3916,12460097,14517,6816188,13330,1,100,N,N,N,CP_Units,TT_Task,DT_FixedDUR2,RV_OK,TK_Complete,EK000MB33A,101-B Develop & Issue Load Sheet,,,,0,,0,,24,,,0,,2005-03-16 08:00,2005-03-18 17:00,2007-02-07 08:01,2007-02-07 08:01,,2007-01-27 00:00,2007-01-27 00:00,,,2005-03-16 08:00,2005-03-18 17:00,,,,,PT_Normal,,,,,TdDez0zlTP2JdMR9A5ocAA,,,,N,,,,,2007-02-01 02:43,2007-02-04 01:05,hbe4678,hbe4678,,,0
3917,12460098,14517,6816188,13330,1,100,N,N,N,CP_Units,TT_Task,DT_FixedDUR2,RV_OK,TK_Complete,EK000MD42P,Confirm Analytical Design for ERW - MD402,,,,0,,0,,80,,,0,,2005-04-05 08:00,2005-04-20 17:00,2007-01-09 08:01,2007-01-09 08:01,,2007-01-27 00:00,2007-01-27 00:00,,,2005-04-05 08:00,2005-04-18 17:00,,,,,PT_Normal,,,,,CiyYoCwnQ9i+jt16nQAPgg,,,,N,,,,,2007-02-01 02:43,2007-02-04 01:05,hbe4678,hbe4678,,,0
3918,12460099,14517,6816188,13330,1,100,N,N,N,CP_Units,TT_Task,DT_FixedDUR2,RV_OK,TK_Complete,EK000MD46B,Develop/Issue Load Sht & Design Data ERW - MD411,,,,0,0,0,0,32,0,0,0,,2005-05-23 00:00,2005-06-03 00:00,2007-02-07 08:01,2007-02-07 08:01,,2007-01-27 00:00,2007-01-27 00:00,,,2005-05-31 08:00,2005-06-03 17:00,,,,,PT_Normal,,,,,WHNkvE7oQNeItZWmrwizoA,,,,N,0,0,,,2007-02-01 02:43,2007-02-04 01:05,hbe4678,hbe4678,,,0
3919,12460100,14517,6816188,13330,1,100,N,N,N,CP_Units,TT_Task,DT_FixedDUR2,RV_OK,TK_Complete,EK000ML43A,Develop & Issue Load Sheets for ERW - ML430,,,,0,,0,,24,,,0,,2005-04-15 08:00,2005-04-19 17:00,2007-03-07 08:01,2007-03-07 08:01,,2007-01-27 00:00,2007-01-27 00:00,,,2005-04-15 08:00,2005-04-19 17:00,,,,,PT_Normal,,,,,Yp0TqQSSSY2NkQBebRRY6Q,,,,N,,,,,2007-02-01 02:43,2007-02-04 01:05,hbe4678,hbe4678,,,0
3920,12460101,14517,6816188,13330,1,100,N,N,N,CP_Units,TT_Task,DT_FixedDUR2,RV_OK,TK_Complete,EK000ML44A,Develop & Issue Load Sheets for ERW - ML440,,,,0,,0,,24,,,0,,2005-04-15 08:00,2005-04-19 17:00,2009-02-15 08:01,2009-02-15 08:01,,2007-01-27 00:00,2007-01-27 00:00,,,2005-04-15 08:00,2005-04-19 17:00,,,,,PT_Normal,,,,,rTheiSSdQVKCCR5tfYk7sQ,,,,N,,,,,2007-02-01 02:43,2007-02-04 01:05,hbe4678,hbe4678,,,0
3921,12460102,14517,6816188,13330,1,100,N,N,N,CP_Units,TT_Task,DT_FixedDUR2,RV_OK,TK_Complete,EK000MJ37A,Develop & Issue Load Sheets for ERW - MJ340,,,,0,,0,,16,,,0,,2005-04-05 08:00,2005-04-08 17:00,2007-02-07 08:01,2007-02-07 08:01,,2007-01-27 00:00,2007-01-27 00:00,,,2005-04-05 08:00,2005-04-06 17:00,,,,,PT_Normal,,,,,Gtcp3XIoS7OiIU+InQsuaA,,,,N,,,,,2007-02-01 02:43,2007-02-04 01:05,hbe4678,hbe4678,,,0
3922,12460103,14517,6816188,13330,1,100,N,N,N,CP_Units,TT_Task,DT_FixedDUR2,RV_OK,TK_Complete,EK000MJ75A,Develop & Issue Load Sheets for ERW - MJ750,,,,0,,0,,24,,,0,,2005-04-04 08:00,2005-04-04 17:00,2007-01-09 08:01,2007-01-09 08:01,,2007-01-27 00:00,2007-01-27 00:00,,,2005-04-04 08:00,2005-04-06 17:00,,,,,PT_Normal,,,,,Tv6LQHJITPaLDtiXQJUZ7g,,,,N,,,,,2007-02-01 02:43,2007-02-04 01:05,hbe4678,hbe4678,,,0
3923,12460104,14517,6816188,13330,1,100,N,N,N,CP_Units,TT_Task,DT_FixedDUR2,RV_OK,TK_Complete,EK000MJ32A,Develop & Issue Load Sheets for ERW - MJ302,,,,0,,0,,16,,,0,,2005-04-14 08:00,2005-04-19 17:00,2007-01-09 08:01,2007-01-09 08:01,,2007-01-27 00:00,2007-01-27 00:00,,,2005-04-14 08:00,2005-04-15 17:00,,,,,PT_Normal,,,,,/0cuycJyRYm8Gdoqu0EUbg,,,,N,,,,,2007-02-01 02:43,2007-02-04 01:05,hbe4678,hbe4678,,,0
3924,12460105,14517,6816188,13330,1,100,N,N,N,CP_Units,TT_Task,DT_FixedDUR2,RV_OK,TK_Complete,EK000MJ35A,Develop & Issue Load Sheets for ERW - MJ305,,,,0,0,0,,40,,0,0,,2005-03-30 08:00,2005-04-22 17:00,2007-02-07 08:01,2007-02-07 08:01,,2007-01-27 00:00,2007-01-27 00:00,,,2005-03-30 08:00,2005-04-05 17:00,,,,,PT_Normal,,,,,kb0qeeM9SyuyEwEuXBZV5Q,,,,N,0,0,,,2007-02-01 02:43,2007-02-04 01:05,hbe4678,hbe4678,,,0
3925,12460106,14517,6816188,13330,1,100,N,N,N,CP_Units,TT_Task,DT_FixedDUR2,RV_OK,TK_Complete,EK000MJ21A,Develop & Issue Load Sheets for ERW - MJ202,,,,0,,0,,24,,,0,,2005-03-16 08:00,2005-03-23 17:00,2006-12-25 08:00,2006-12-25 08:00,,2007-01-27 00:00,2007-01-27 00:00,,,2005-03-16 08:00,2005-03-18 17:00,,,,,PT_Normal,,,,,mRZtk5ovT923DcxYAfclKQ,,,,N,,,,,2007-02-01 02:43,2007-02-04 01:05,hbe4678,hbe4678,,,0
3926,12460107,14517,6816188,13330,1,100,N,N,N,CP_Units,TT_Task,DT_FixedDUR2,RV_OK,TK_Complete,EK000MJ22A,Develop & Issue Load Sheets for ERW - MJ201,,,,0,,0,,24,,,0,,2005-03-16 08:00,2005-03-18 17:00,2006-12-25 08:00,2006-12-25 08:00,,2007-01-27 00:00,2007-01-27 00:00,,,2005-03-16 08:00,2005-03-18 17:00,,,,,PT_Normal,,,,,BrvvJGnzQIOzucIrjnnOpw,,,,N,,,,,2007-02-01 02:43,2007-02-04 01:05,hbe4678,hbe4678,,,0
3927,12460108,14517,6816188,13330,1,100,N,N,N,CP_Units,TT_Task,DT_FixedDUR2,RV_OK,TK_Complete,EK000MJ31A,Develop & Issue Load Sheets for ERW - MJ301,,,,0,,0,,32,,,0,,2005-03-21 08:00,2005-03-23 17:00,2007-01-09 08:01,2007-01-09 08:01,,2007-01-27 00:00,2007-01-27 00:00,,,2005-03-21 08:00,2005-03-24 17:00,,,,,PT_Normal,,,,,EZw/zRhKRduQMfS+SXlsRQ,,,,N,,,,,2007-02-01 02:43,2007-02-04 01:05,hbe4678,hbe4678,,,0
3928,12460109,14517,6816188,13330,1,100,N,N,N,CP_Units,TT_Task,DT_FixedDUR2,RV_OK,TK_Complete,EK000MD46P,Confirm Analytical Design for ERW - MD411,,,,0,0,0,0,40,0,0,0,,2005-06-01 08:00,2005-06-10 17:00,2007-02-07 08:01,2007-02-07 08:01,,2007-01-27 00:00,2007-01-27 00:00,,,2005-06-01 08:00,2005-06-07 17:00,,,,,PT_Normal,,,,,IfR5YUP+QOqRwUWhFajnHw,,,,N,0,0,,,2007-02-01 02:43,2007-02-04 01:05,hbe4678,hbe4678,,,0
3929,12460110,14517,6816188,13330,1,100,N,N,N,CP_Units,TT_Task,DT_FixedDUR2,RV_OK,TK_Complete,EK000MD47A,Develop & Issue Load Sheets for ERW - MD406,,,,0,0,0,,24,,0,0,,2005-04-20 08:00,2005-04-22 17:00,2007-01-09 08:01,2007-01-09 08:01,,2007-01-27 00:00,2007-01-27 00:00,,,2005-04-20 08:00,2005-04-22 17:00,,,,,PT_Normal,,,,,Yro5DxMISzK+9j0LW/86wg,,,,N,0,0,,,2007-02-01 02:43,2007-02-04 01:05,hbe4678,hbe4678,,,0
3930,12460111,14517,6816188,13330,1,100,N,N,N,CP_Units,TT_Task,DT_FixedDUR2,RV_OK,TK_Complete,EK000MD47P,Confirm Analytical Design for ERW - MD406,,,,0,0,0,0,80,0,0,0,,2005-05-19 00:00,2005-05-23 00:00,2007-01-09 08:01,2007-01-09 08:01,,2007-01-27 00:00,2007-01-27 00:00,,,2005-05-20 08:00,2005-06-03 17:00,,,,,PT_Normal,,,,,mSbFfTFiSyeY5bMmsQMENw,,,,N,0,0,,,2007-02-01 02:43,2007-02-04 01:05,hbe4678,hbe4678,,,0
3931,12460112,14517,6816188,13330,1,100,N,N,N,CP_Units,TT_Task,DT_FixedDUR2,RV_OK,TK_Complete,EK000MD51A,Develop & Issue Load Sheets for ERW - MD501,,,,0,,0,,16,,,0,,2005-03-30 08:00,2005-04-04 17:00,2007-02-06 08:01,2007-02-06 08:01,,2007-01-27 00:00,2007-01-27 00:00,,,2005-03-30 08:00,2005-03-31 17:00,,,,,PT_Normal,,,,,+Vp8vVzhRFemci9Ki/iX3A,,,,N,,,,,2007-02-01 02:43,2007-02-04 01:05,hbe4678,hbe4678,,,0
3932,12460113,14517,6816188,13330,1,100,N,N,N,CP_Units,TT_Task,DT_FixedDUR2,RV_OK,TK_Complete,EK000MF31P,Confirm Analytical Design for ERW - MF301,,,,0,0,0,0,80,0,0,0,,2005-04-25 08:00,2005-04-29 00:00,2007-02-06 08:01,2007-02-06 08:01,,2007-01-27 00:00,2007-01-27 00:00,,,2005-04-25 08:00,2005-05-06 17:00,,,,,PT_Normal,,,,,Tkjdd6XtQKu3BmwjOe8MXw,,,,N,0,0,,,2007-02-01 02:43,2007-02-04 01:05,hbe4678,hbe4678,,,0
3933,12460114,14517,6816188,13330,1,100,N,N,N,CP_Units,TT_Task,DT_FixedDUR2,RV_OK,TK_Complete,EK000MD43P,Confirm Analytical Design for ERW - MD403,,,,0,,0,,80,,,0,,2005-04-08 08:00,2005-04-15 17:00,2007-04-24 08:01,2007-04-24 08:01,,2007-01-27 00:00,2007-01-27 00:00,,,2005-04-08 08:00,2005-04-21 17:00,,,,,PT_Normal,,,,,fkLsD9KMQOWxzrWNo2ajUQ,,,,N,,,,,2007-02-01 02:43,2007-02-04 01:05,hbe4678,hbe4678,,,0
3934,12460115,14517,6816188,13330,1,100,N,N,N,CP_Units,TT_Task,DT_FixedDUR2,RV_OK,TK_Complete,EK000MD44A,Develop & Issue Load Sheets for ERW - MD404,,,,0,,0,,16,,,0,,2005-03-22 08:00,2005-04-19 17:00,2007-01-09 08:01,2007-01-09 08:01,,2007-01-27 00:00,2007-01-27 00:00,,,2005-03-22 08:00,2005-03-23 17:00,,,,,PT_Normal,,,,,OvZ5dYMqSiWaptiaC0P99w,,,,N,,,,,2007-02-01 02:43,2007-02-04 01:05,hbe4678,hbe4678,,,0
3935,12460116,14517,6816188,13330,1,100,N,N,N,CP_Units,TT_Task,DT_FixedDUR2,RV_OK,TK_Complete,EK000MD45P,Confirm Analytical Design for ERW - MD405,,,,0,0,0,0,80,0,0,0,,2005-04-29 00:00,2005-05-26 00:00,2007-04-15 08:01,2007-04-15 08:01,,2007-01-27 00:00,2007-01-27 00:00,,,2005-05-09 08:00,2005-05-20 17:00,,,,,PT_Normal,,,,,eMABjIGtSl2qdyVRHqPcLg,,,,N,0,0,,,2007-02-01 02:43,2007-02-04 01:05,hbe4678,hbe4678,,,0
3936,12460117,14517,6816188,13330,1,100,N,N,N,CP_Units,TT_Task,DT_FixedDUR2,RV_OK,TK_Complete,EK000MD44P,Confirm Analytical Design  for ERW - MD404,,,,0,0,0,0,80,0,0,0,,2005-05-02 08:00,2005-05-04 00:00,2007-01-09 08:01,2007-01-09 08:01,,2007-01-27 00:00,2007-01-27 00:00,,,2005-05-02 08:00,2005-05-13 17:00,,,,,PT_Normal,,,,,q9yCJqZBSeiJt5BBf8POVQ,,,,N,0,0,,,2007-02-01 02:43,2007-02-04 01:05,hbe4678,hbe4678,,,0
3937,12460118,14517,6816188,13330,1,100,N,N,N,CP_Units,TT_Task,DT_FixedDUR2,RV_OK,TK_Complete,EK000MD44Q,Develop Analytical Sketches for ERW - MD404,,,,0,0,0,0,80,0,0,0,,2005-05-20 08:00,2005-05-27 17:00,2007-01-09 08:01,2007-01-09 08:01,,2007-01-27 00:00,2007-01-27 00:00,,,2005-05-20 08:00,2005-06-03 17:00,,,,,PT_Normal,,,,,C257MijqSXq0eXul/3aOow,,,,N,0,0,,,2007-02-01 02:43,2007-02-04 01:05,hbe4678,hbe4678,,,0
3938,12460119,14517,6816188,13330,1,100,N,N,N,CP_Units,TT_Task,DT_FixedDUR2,RV_OK,TK_Complete,EK000MD45A,Develop & Issue Load Sheets for ERW - MD405,,,,0,,0,,16,,,0,,2005-04-15 08:00,2005-04-19 17:00,2007-01-09 08:01,2007-01-09 08:01,,2007-01-27 00:00,2007-01-27 00:00,,,2005-04-15 08:00,2005-04-18 17:00,,,,,PT_Normal,,,,,KZwZsMMPS++Gqe3ERYlPLA,,,,N,,,,,2007-02-01 02:43,2007-02-04 01:05,hbe4678,hbe4678,,,0
3939,12460120,14517,6816188,13330,1,100,N,N,N,CP_Units,TT_Task,DT_FixedDUR2,RV_OK,TK_Complete,EK000MD33P,Develop Analytical Sketches for ERW - MD303,,,,0,0,0,,280,,0,0,,2005-03-21 08:00,2005-06-03 17:00,2007-04-09 08:01,2007-04-09 08:01,,2007-01-27 00:00,2007-01-27 00:00,,,2005-03-21 08:00,2005-05-06 17:00,,,,,PT_Normal,,,,,Me7EH0XPQfCvooBtIX9yGg,,,,N,0,0,,,2007-02-01 02:43,2007-02-04 01:05,hbe4678,hbe4678,,,0
3940,12460121,14517,6816188,13330,1,100,N,N,N,CP_Units,TT_Task,DT_FixedDUR2,RV_OK,TK_Complete,EK000MD34A,Develop & Issue Load Sheets for ERW - MD304,,,,0,,0,,32,,,0,,2005-03-23 08:00,2005-03-28 17:00,2006-12-25 08:00,2006-12-25 08:00,,2007-01-27 00:00,2007-01-27 00:00,,,2005-03-23 08:00,2005-03-28 17:00,,,,,PT_Normal,,,,,0TqO+9SER2WbdBczz9xoYw,,,,N,,,,,2007-02-01 02:43,2007-02-04 01:05,hbe4678,hbe4678,,,0
3941,12460122,14517,6816188,13330,1,100,N,N,N,CP_Units,TT_Task,DT_FixedDUR2,RV_OK,TK_Complete,EK000MD34P,Confirm Analytical Design for ERW - MD304,,,,0,,0,,72,,,0,,2005-04-11 08:00,2005-04-19 17:00,2007-04-15 08:01,2007-04-15 08:01,,2007-01-27 00:00,2007-01-27 00:00,,,2005-04-11 08:00,2005-04-21 17:00,,,,,PT_Normal,,,,,5A/BJKfiRne3YC4NpXTSkQ,,,,N,,,,,2007-02-01 02:43,2007-02-04 01:05,hbe4678,hbe4678,,,0
3942,12460123,14517,6816188,13330,1,100,N,N,N,CP_Units,TT_Task,DT_FixedDUR2,RV_OK,TK_Complete,EK000PR050,Electrical Load Summary - Initial,,,,0,,0,,72,,,0,,2005-02-21 08:00,2005-03-03 17:00,2007-02-07 08:01,2007-02-07 08:01,,2007-01-27 00:00,2007-01-27 00:00,,,2005-02-21 08:00,2005-03-03 17:00,,,,,PT_Normal,,,,,EO8Brqj3QBeb2IAlB/pxww,,,,N,,,,,2007-02-01 02:43,2007-02-04 01:05,hbe4678,hbe4678,,,0
3943,12460124,14517,6816188,13330,1,100,N,N,N,CP_Units,TT_Task,DT_FixedDUR2,RV_OK,TK_Complete,EK000PR055,Feed & Fuel Summary,,,,0,,0,,120,,,0,,2005-02-21 08:00,2005-04-08 17:00,2007-01-09 08:01,2007-01-09 08:01,,2007-01-27 00:00,2007-01-27 00:00,,,2005-02-21 08:00,2005-03-11 17:00,,,,,PT_Normal,,,,,FZssUOTJRwK2pej9nWTT7Q,,,,N,,,,,2007-02-01 02:43,2007-02-04 01:05,hbe4678,hbe4678,,,0
3944,12460125,14517,6816188,13330,1,100,N,N,N,CP_Units,TT_Task,DT_FixedDUR2,RV_OK,TK_Complete,EK000PR060,Process Load Sheets,,,,0,0,0,,280,,0,0,,2005-03-16 08:00,2005-04-22 00:00,2007-02-07 08:01,2007-02-07 08:01,,2007-01-27 00:00,2007-01-27 00:00,,,2005-03-16 08:00,2005-05-03 17:00,,,,,PT_Normal,,,,,UoQlzIgMRYiPrWGT0Tmjlw,,,,N,0,0,,,2007-02-01 02:43,2007-02-04 01:05,hbe4678,hbe4678,,,0
3945,12460126,14517,6816188,13330,1,100,N,N,N,CP_Units,TT_Task,DT_FixedDUR2,RV_OK,TK_Complete,EK000PR065,Catalyst and Chemical Specs,,,,0,0,0,0,40,0,0,0,,2005-05-02 00:00,2005-05-09 17:00,2007-06-19 08:01,2007-06-19 08:01,,2007-01-27 00:00,2007-01-27 00:00,,,2005-04-25 08:00,2005-04-29 17:00,,,,,PT_Normal,,,,,mWazce2LTeayTDGuJXOd5A,,,,N,0,0,,,2007-02-01 02:43,2007-02-04 01:05,hbe4678,hbe4678,,,0
3946,12460127,14517,6816188,13330,1,100,N,N,N,CP_Units,TT_Task,DT_FixedDUR2,RV_OK,TK_Complete,EK000PR070,Effluent Summary,,,,0,0,0,0,40,0,0,0,,2005-04-25 08:00,2005-04-29 17:00,2007-05-04 17:00,2007-05-04 17:00,,2007-01-27 00:00,2007-01-27 00:00,,,2005-04-25 08:00,2005-04-29 17:00,,,,,PT_Normal,,,,,uXfbvhbqQ3GCZPmO0Wxdzw,,,,N,0,0,,,2007-02-01 02:43,2007-02-04 01:05,hbe4678,hbe4678,,,0
3947,12460128,14517,6816188,13330,1,100,N,N,N,CP_Units,TT_Task,DT_FixedDUR2,RV_OK,TK_Complete,EK000PR075,Process Description,,,,0,0,0,0,40,0,0,0,,2005-05-02 00:00,2005-05-26 00:00,2007-06-19 08:01,2007-06-19 08:01,,2007-01-27 00:00,2007-01-27 00:00,,,2005-04-25 08:00,2005-04-29 17:00,,,,,PT_Normal,,,,,lm/UKa5HR5eeisePBFNkMA,,,,N,0,0,,,2007-02-01 02:43,2007-02-04 01:05,hbe4678,hbe4678,,,0
3948,12460129,14517,6816188,13330,1,100,N,N,N,CP_Units,TT_Task,DT_FixedDUR2,RV_OK,TK_Complete,EK000PR076,Identify Risk of Equipment Changes,,,,0,,0,,40,,,0,,2005-03-21 08:00,2005-04-08 17:00,2009-02-15 08:01,2009-02-15 08:01,,2007-01-27 00:00,2007-01-27 00:00,,,2005-03-21 08:00,2005-03-25 17:00,,,,,PT_Normal,,,,,n3D0bAABRcyjwNd5fON85Q,,,,N,,,,,2007-02-01 02:43,2007-02-04 01:05,hbe4678,hbe4678,,,0
3949,12460130,14517,6816188,13330,1,100,N,N,N,CP_Units,TT_Task,DT_FixedDUR2,RV_OK,TK_Complete,EK000PR080,Input to Process Guarantees,,,,0,0,0,,200,,0,0,,2005-04-13 08:00,2005-06-03 00:00,2009-02-15 08:01,2009-02-15 08:01,,2007-01-27 00:00,2007-01-27 00:00,,,2005-04-13 08:00,2005-05-17 17:00,,,,,PT_Normal,,,,,xlFNflcoSL+Q+4ZeW6oqoQ,,,,N,0,0,,,2007-02-01 02:43,2007-02-04 01:05,hbe4678,hbe4678,,,0
3950,12460131,14517,6816188,13330,1,100,N,N,N,CP_Units,TT_Task,DT_FixedDUR2,RV_OK,TK_Complete,EK000PR115,Issue Prelim Load Sht for Air Cooling Study,,,,0,,0,,40,,,0,,2005-03-21 08:00,2005-03-25 17:00,2007-03-07 08:01,2007-03-07 08:01,,2007-01-27 00:00,2007-01-27 00:00,,,2005-03-21 08:00,2005-03-25 17:00,,,,,PT_Normal,,,,,NAZB8sn9RIW+0HxLILz+kQ,,,,N,,,,,2007-02-01 02:43,2007-02-04 01:05,hbe4678,hbe4678,,,0
3951,12460132,14517,6816188,13330,1,100,N,N,N,CP_Units,TT_Task,DT_FixedDUR2,RV_OK,TK_Complete,EK000PR140,Formal Issue of Process Release,,,,0,0,0,0,40,0,0,0,,2005-05-18 08:00,2005-06-08 00:00,2007-06-19 08:01,2007-06-19 08:01,,2007-01-27 00:00,2007-01-27 00:00,,,2005-05-18 08:00,2005-05-24 17:00,,,,,PT_Normal,,,,,KaRPJr9mQA2OAHaniZ+0oQ,,,,N,0,0,,,2007-02-01 02:43,2007-02-04 01:05,hbe4678,hbe4678,,,0
3952,12460133,14517,6816188,13330,1,100,N,N,N,CP_Units,TT_Task,DT_FixedDUR2,RV_OK,TK_Complete,EK000PR010,Process Work Plan,,,,0,,0,,120,,,0,,2005-02-21 08:00,2005-04-22 17:00,2006-12-25 08:00,2006-12-25 08:00,,2007-01-27 00:00,2007-01-27 00:00,,,2005-02-21 08:00,2005-03-11 17:00,,,,,PT_Normal,,,,,5F5cYWfRT42sWBW1RJYeKA,,,,N,,,,,2007-02-01 02:43,2007-02-04 01:05,hbe4678,hbe4678,,,0
3953,12460134,14517,6816188,13330,1,100,N,N,N,CP_Units,TT_Task,DT_FixedDUR2,RV_OK,TK_Complete,EK000PR015,Process Configuration,,,,0,,0,,120,,,0,,2005-02-21 08:00,2005-03-15 17:00,2007-02-07 08:01,2007-02-07 08:01,,2007-01-27 00:00,2007-01-27 00:00,,,2005-02-21 08:00,2005-03-11 17:00,,,,,PT_Normal,,,,,/quSHZbuTgqmbdUtYWUAZQ,,,,N,,,,,2007-02-01 02:43,2007-02-04 01:05,hbe4678,hbe4678,,,0
3954,12460135,14517,6816188,13330,1,100,N,N,N,CP_Units,TT_Task,DT_FixedDUR2,RV_OK,TK_Complete,EK000PR020,Heat & Material Balances (SOR & EOR),,,,0,,0,,120,,,0,,2005-02-21 08:00,2005-03-25 17:00,2006-12-25 08:00,2006-12-25 08:00,,2007-01-27 00:00,2007-01-27 00:00,,,2005-02-21 08:00,2005-03-11 17:00,,,,,PT_Normal,,,,,Y1zMY/pmTCWIRMGQzq3E3g,,,,N,,,,,2007-02-01 02:43,2007-02-04 01:05,hbe4678,hbe4678,,,0
3955,12460136,14517,6816188,13330,1,100,N,N,N,CP_Units,TT_Task,DT_FixedDUR2,RV_OK,TK_Complete,EK000PR025,Pressure Profile,,,,0,,0,,72,,,0,,2005-02-21 08:00,2005-03-03 17:00,2007-02-07 08:01,2007-02-07 08:01,,2007-01-27 00:00,2007-01-27 00:00,,,2005-02-21 08:00,2005-03-03 17:00,,,,,PT_Normal,,,,,cIe5CSiZRqKBx+EvxLdr+g,,,,N,,,,,2007-02-01 02:43,2007-02-04 01:05,hbe4678,hbe4678,,,0
3956,12460137,14517,6816188,13330,1,100,N,N,N,CP_Units,TT_Task,DT_FixedDUR2,RV_OK,TK_Complete,EK000PR030,Stream Summary,,,,0,,0,,120,,,0,,2005-02-21 08:00,2005-03-15 17:00,2006-12-25 08:00,2006-12-25 08:00,,2007-01-27 00:00,2007-01-27 00:00,,,2005-02-21 08:00,2005-03-11 17:00,,,,,PT_Normal,,,,,b38OO5JzRPKpXZQaVNlAEQ,,,,N,,,,,2007-02-01 02:43,2007-02-04 01:05,hbe4678,hbe4678,,,0
3957,12460138,14517,6816188,13330,1,100,N,N,N,CP_Units,TT_Task,DT_FixedDUR2,RV_OK,TK_Complete,EK000PR035,Process Flow Diagrams PFD's - EOR,,,,0,,0,,120,,,0,,2005-02-21 08:00,2005-03-15 17:00,2006-12-25 08:00,2006-12-25 08:00,,2007-01-27 00:00,2007-01-27 00:00,,,2005-02-21 08:00,2005-03-11 17:00,,,,,PT_Normal,,,,,0ZS6Ys/yRWKT7Yy7ApVJag,,,,N,,,,,2007-02-01 02:43,2007-02-04 01:05,hbe4678,hbe4678,,,0
3958,12460139,14517,6816188,13330,1,100,N,N,N,CP_Units,TT_Task,DT_FixedDUR2,RV_OK,TK_Complete,EK000PR040,Steam Balance Diagram - EOR,,,,0,,0,,120,,,0,,2005-02-21 08:00,2005-03-15 17:00,2006-12-25 08:00,2006-12-25 08:00,,2007-01-27 00:00,2007-01-27 00:00,,,2005-02-21 08:00,2005-03-11 17:00,,,,,PT_Normal,,,,,YJ2CdPytQwWNSoGu6pKLuQ,,,,N,,,,,2007-02-01 02:43,2007-02-04 01:05,hbe4678,hbe4678,,,0
3959,12460140,14517,6816188,13330,1,100,N,N,N,CP_Units,TT_Task,DT_FixedDUR2,RV_OK,TK_Complete,EK000PR045,Cooling Water Balance - EOR,,,,0,,0,,120,,,0,,2005-02-21 08:00,2005-03-17 17:00,2006-12-25 08:00,2006-12-25 08:00,,2007-01-27 00:00,2007-01-27 00:00,,,2005-02-21 08:00,2005-03-11 17:00,,,,,PT_Normal,,,,,NS+x01+gQpKVnq6PkVg6Ug,,,,N,,,,,2007-02-01 02:43,2007-02-04 01:05,hbe4678,hbe4678,,,0
3960,12460141,14517,6816188,13330,1,100,N,N,N,CP_Units,TT_Task,DT_FixedDUR2,RV_OK,TK_Complete,EK000MU41A,Develop & Issue Load Sheets for ERW - MU410,,,,0,,0,,40,,,0,,2005-04-11 08:00,2005-04-19 17:00,2007-01-09 08:01,2007-01-09 08:01,,2007-01-27 00:00,2007-01-27 00:00,,,2005-04-11 08:00,2005-04-15 17:00,,,,,PT_Normal,,,,,wE62kvZbRXWaz+xV3GZqkw,,,,N,,,,,2007-02-01 02:43,2007-02-04 01:05,hbe4678,hbe4678,,,0
3961,12460142,14517,6816188,13330,1,100,N,N,N,CP_Units,TT_Task,DT_FixedDUR2,RV_OK,TK_Complete,EK000MU35A,Develop & Issue Load Sheets for ERW - MU350,,,,0,,0,,40,,,0,,2005-04-18 08:00,2005-04-19 17:00,2007-05-03 08:01,2007-05-03 08:01,,2007-01-27 00:00,2007-01-27 00:00,,,2005-04-18 08:00,2005-04-22 17:00,,,,,PT_Normal,,,,,X4J/9rtwTTWq2IaYy4lqnQ,,,,N,,,,,2007-02-01 02:43,2007-02-04 01:05,hbe4678,hbe4678,,,0
3962,12460143,14517,6816188,13330,1,100,N,N,N,CP_Units,TT_Task,DT_FixedDUR2,RV_OK,TK_Complete,EK000ML31A,Develop & Issue Load Sheets for ERW - ML313,,,,0,,0,,24,,,0,,2005-04-04 08:00,2005-04-04 17:00,2007-01-09 08:01,2007-01-09 08:01,,2007-01-27 00:00,2007-01-27 00:00,,,2005-04-04 08:00,2005-04-06 17:00,,,,,PT_Normal,,,,,ABCWgBAkT1GNewSNoehXPg,,,,N,,,,,2007-02-01 02:43,2007-02-04 01:05,hbe4678,hbe4678,,,0
3963,12460144,14517,6816188,13330,1,100,N,N,N,CP_Units,TT_Task,DT_FixedDUR2,RV_OK,TK_Complete,EK000ML42A,Develop & Issue Load Sheets for ERW - ML420,,,,0,,0,,24,,,0,,2005-04-18 08:00,2005-04-19 17:00,2007-01-09 08:01,2007-01-09 08:01,,2007-01-27 00:00,2007-01-27 00:00,,,2005-04-18 08:00,2005-04-20 17:00,,,,,PT_Normal,,,,,BdIH+gzRTUG9+DGcc2sQ4w,,,,N,,,,,2007-02-01 02:43,2007-02-04 01:05,hbe4678,hbe4678,,,0
3964,12460145,14517,6816189,13330,1,100,N,N,N,CP_Units,TT_Task,DT_FixedDUR2,RV_OK,TK_Complete,EK000FP025,FP Gas Detection Location Plans - Not Required,,,,0,0,0,0,840,0,0,0,,2005-03-25 00:00,2005-09-23 00:00,2009-02-15 08:01,2009-02-15 08:01,,2007-01-27 00:00,2007-01-27 00:00,,,2005-06-13 08:00,2005-11-08 17:00,,,,,PT_Normal,,,,,L87g8Ja+RweP7GMqF3/iTw,XuQMluVJaEahkQ1+11v+0h,,,N,0,0,,,2007-02-01 02:43,2007-02-04 01:05,hbe4678,hbe4678,,,0
3965,12460146,14517,6816189,13330,1,100,N,N,N,CP_Units,TT_Task,DT_FixedDUR2,RV_OK,TK_Complete,EK000FP050,FP Overall Firewater P&IDs - Development & Issue ICA,,,,0,0,0,0,424,0,0,0,,2005-05-06 08:00,2005-07-19 00:00,2009-02-15 08:01,2009-02-15 08:01,,2007-01-27 00:00,2007-01-27 00:00,,,2005-05-06 08:00,2005-07-22 17:00,,,,,PT_Normal,,,,,ocgYrCpeR8+qFjGZmsLyPg,F8DAahcERUGY9Qmv6pjJQx,,,N,0,0,,,2007-02-01 02:43,2007-02-04 01:05,hbe4678,hbe4678,,,0
3966,12460147,14517,6816189,13330,1,100,N,N,N,CP_Units,TT_Task,DT_FixedDUR2,RV_OK,TK_Complete,EK000FP055,FP Overall  Firewater P&IDs - Development & Issue IPL,,,,0,0,0,0,560,0,0,0,,2005-07-20 00:00,2005-12-01 00:00,2009-02-15 08:01,2009-02-15 08:01,,2007-01-27 00:00,2007-01-27 00:00,,,2005-08-22 08:00,2005-11-25 17:00,,,,,PT_Normal,,,,,RvAQhCD5QP+i+NSPsIhRBA,bf/KF6tWkUCFsWmo/QScUx,,,N,0,0,,,2007-02-01 02:43,2007-02-04 01:05,hbe4678,hbe4678,,,0
3967,12460148,14517,6816189,13330,1,100,N,N,N,CP_Units,TT_Task,DT_FixedDUR2,RV_OK,TK_Complete,EK000FP060,FP Overall  Firewater P&IDs - Development & Issue IFD,,,,0,0,0,0,520,0,0,0,,2006-08-21 08:00,2006-09-14 00:00,2009-02-15 08:01,2009-02-15 08:01,,2007-01-27 00:00,2007-01-27 00:00,,,2006-08-21 08:00,2006-11-17 17:00,,,,,PT_Normal,,,,,GQBh5YS3TfO8rmVZecZWoQ,xkgiITlBJ0W5pauRZ5pXEh,,,N,0,0,,,2007-02-01 02:43,2007-02-04 01:05,hbe4678,hbe4678,,,0
3968,12460149,14517,6816189,13330,1,100,N,N,N,CP_Units,TT_Task,DT_FixedDUR2,RV_OK,TK_Complete,EK000FP065,FP Overall  Firewater P&IDs - Development & Issue IFC,,,,0,0,0,0,160,0,0,0,,2006-10-02 00:00,2006-10-27 00:00,2009-02-15 08:01,2009-02-15 08:01,,2007-01-27 00:00,2007-01-27 00:00,,,2006-12-18 08:00,2007-01-12 17:00,,,,,PT_Normal,,,,,Vzssxr/JS6i7HfwiraoSSw,/rQNaT1TyEqLZ2OPT6yKJR,,,N,0,0,,,2007-02-01 02:43,2007-02-04 01:05,hbe4678,hbe4678,,,0
3969,12460150,14517,6816190,13330,1,100,N,N,N,CP_Units,TT_Task,DT_FixedDUR2,RV_OK,TK_Complete,EK000ML44B,Develop & Issue Design Data for ERW - ML440,,,,0,0,0,0,40,0,0,0,,2005-04-25 08:00,2005-04-27 00:00,2009-02-15 08:01,2009-02-15 08:01,,2007-01-27 00:00,2007-01-27 00:00,,,2005-04-25 08:00,2005-04-29 17:00,,,,,PT_Normal,,,,,oSx1LnR4T2KtJRzbUiVHTQ,,,,N,0,0,,,2007-02-01 02:43,2007-02-04 01:05,hbe4678,hbe4678,,,0
3970,12460151,14517,6816190,13330,1,100,N,N,N,CP_Units,TT_Task,DT_FixedDUR2,RV_OK,TK_Complete,EK000ML50B,Develop/Issue Load Sht & Design Data ERW - ML500,,,,0,,0,,40,,,0,,2005-03-29 08:00,2005-04-04 17:00,2007-02-07 08:01,2007-02-07 08:01,,2007-01-27 00:00,2007-01-27 00:00,,,2005-03-29 08:00,2005-04-04 17:00,,,,,PT_Normal,,,,,Dvj/O9LrRrKkI30dsD8V3A,,,,N,,,,,2007-02-01 02:43,2007-02-04 01:05,hbe4678,hbe4678,,,0
3971,12460152,14517,6816190,13330,1,100,N,N,N,CP_Units,TT_Task,DT_FixedDUR2,RV_OK,TK_Complete,EK000ML51B,Develop/Issue Load Sht & Design Data ERW - ML512,,,,0,0,0,0,32,0,0,0,,2005-05-16 00:00,2005-05-20 00:00,2007-02-07 08:01,2007-02-07 08:01,,2007-01-27 00:00,2007-01-27 00:00,,,2005-05-31 08:00,2005-06-03 17:00,,,,,PT_Normal,,,,,SUZ1GH7DQJ+iEK8RFcRTyg,,,,N,0,0,,,2007-02-01 02:43,2007-02-04 01:05,hbe4678,hbe4678,,,0
3972,12460153,14517,6816190,13330,1,100,N,N,N,CP_Units,TT_Task,DT_FixedDUR2,RV_OK,TK_Complete,EK000MU21B,Develop/Issue Load Sht & Design Data ERW - MU221,,,,0,0,0,0,40,0,0,0,,2005-06-07 08:00,2005-06-10 00:00,2007-01-10 08:00,2007-01-10 08:00,,2007-01-27 00:00,2007-01-27 00:00,,,2005-06-07 08:00,2005-06-13 17:00,,,,,PT_Normal,,,,,le/tZcTiQ7KffyFkRNcCQg,,,,N,0,0,,,2007-02-01 02:43,2007-02-04 01:05,hbe4678,hbe4678,,,0
3973,12460154,14517,6816190,13330,1,100,N,N,N,CP_Units,TT_Task,DT_FixedDUR2,RV_OK,TK_Complete,EK000MU22B,Develop/Issue Load Sht & Design Data ERW - MU222,,,,0,0,0,0,40,0,0,0,,2005-06-07 08:00,2005-06-20 00:00,2007-03-07 08:01,2007-03-07 08:01,,2007-01-27 00:00,2007-01-27 00:00,,,2005-06-07 08:00,2005-06-13 17:00,,,,,PT_Normal,,,,,fZwe1XGCR1GtK97R/pVpQg,,,,N,0,0,,,2007-02-01 02:43,2007-02-04 01:05,hbe4678,hbe4678,,,0
3974,12460155,14517,6816190,13330,1,100,N,N,N,CP_Units,TT_Task,DT_FixedDUR2,RV_OK,TK_Complete,EK000ML31B,Develop & Issue Design Data for ERW - ML313,,,,0,,0,,40,,,0,,2005-04-05 08:00,2005-04-14 17:00,2007-04-01 08:01,2007-04-01 08:01,,2007-01-27 00:00,2007-01-27 00:00,,,2005-04-05 08:00,2005-04-11 17:00,,,,,PT_Normal,,,,,JtxZJE1WRf6cngzRAngASA,,,,N,,,,,2007-02-01 02:43,2007-02-04 01:05,hbe4678,hbe4678,,,0
3975,12460156,14517,6816190,13330,1,100,N,N,N,CP_Units,TT_Task,DT_FixedDUR2,RV_OK,TK_Complete,EK000ML33B,Develop/Issue Load Sht & Design Data ERW - ML330,,,,0,0,0,0,40,0,0,0,,2005-05-16 08:00,2005-05-26 00:00,2007-01-09 08:01,2007-01-09 08:01,,2007-01-27 00:00,2007-01-27 00:00,,,2005-05-16 08:00,2005-05-20 17:00,,,,,PT_Normal,,,,,oOw1uE9CRt6nA+qNxs5G+w,,,,N,0,0,,,2007-02-01 02:43,2007-02-04 01:05,hbe4678,hbe4678,,,0
3976,12460157,14517,6816190,13330,1,100,N,N,N,CP_Units,TT_Task,DT_FixedDUR2,RV_OK,TK_Complete,EK000ML42B,Develop & Issue Design Data for ERW - ML420,,,,0,0,0,0,40,0,0,0,,2005-05-16 08:00,2005-05-20 17:00,2007-01-09 08:01,2007-01-09 08:01,,2007-01-27 00:00,2007-01-27 00:00,,,2005-05-16 08:00,2005-05-20 17:00,,,,,PT_Normal,,,,,8Iu4WSY7TiOY/PqYOEdLTQ,,,,N,0,0,,,2007-02-01 02:43,2007-02-04 01:05,hbe4678,hbe4678,,,0
3977,12460158,14517,6816190,13330,1,100,N,N,N,CP_Units,TT_Task,DT_FixedDUR2,RV_OK,TK_Complete,EK000PS00C,000 SP Items - Technical Evaluation,,,,0,0,0,0,40,0,0,0,,2006-03-14 00:00,2006-03-31 17:00,2008-01-09 08:01,2008-01-09 08:01,,2007-01-27 00:00,2007-01-27 00:00,,,2006-03-27 08:00,2006-03-31 17:00,,,,,PT_Normal,,,,,hUMCLrWsQaq2iwqao8nIZg,k5yRZzn4M0mIdX2TUt74+x,,,N,0,0,,,2007-02-01 02:43,2007-02-04 01:05,hbe4678,hbe4678,,,0
3978,12460159,14517,6816190,13330,1,100,N,N,N,CP_Units,TT_Task,DT_FixedDUR2,RV_OK,TK_Complete,PK000PSA8C,000 Relief Valves - Technical Evaluation,,,,0,0,0,0,40,0,0,0,,2006-01-23 00:00,2006-01-27 00:00,2008-01-23 08:01,2008-01-23 08:01,,2007-01-27 00:00,2007-01-27 00:00,,,2006-02-13 08:00,2006-02-17 17:00,,,,,PT_Normal,,,,,e9ZP7CT5R8mQr8H5pleVew,lVFhVBNbzUiz7++Prdrm8h,,,N,0,0,,,2007-02-01 02:43,2007-02-04 01:05,hbe4678,hbe4678,,,0
3979,12460160,14517,6816190,13330,1,100,N,N,N,CP_Units,TT_Task,DT_FixedDUR2,RV_OK,TK_Complete,EK000SY095,010 P&ID's - Tech Review,,,,0,0,0,0,40,0,0,0,,2006-02-27 08:00,2006-03-01 00:00,2007-03-13 08:00,2007-03-13 08:00,,2007-01-27 00:00,2007-01-27 00:00,,,2006-02-27 08:00,2006-03-03 17:00,,,,,PT_Normal,,,,,u4VT+71TTgKjDQojyp1ZXA,STDYtwqeWkio8Z5wa/JKYh,,,N,0,0,,,2007-02-01 02:43,2007-02-04 01:05,hbe4678,hbe4678,,,0
3980,12460161,14517,6816190,13330,1,100,N,N,N,CP_Units,TT_Task,DT_FixedDUR2,RV_OK,TK_Complete,EK000SY065,Complete Utility Flow Diagrams,,,,0,0,0,,112,,0,0,,2005-03-07 08:00,2005-05-04 00:00,2006-12-25 08:00,2006-12-25 08:00,,2007-01-27 00:00,2007-01-27 00:00,,,2005-04-11 08:00,2005-04-28 17:00,,,,,PT_Normal,,,,,brOq37q1RE2nbTRx4xS63Q,eP6zZn2/C0WzDFynphhc5x,,,N,0,0,,,2007-02-01 02:43,2007-02-04 01:05,hbe4678,hbe4678,,,0
3981,12460162,14517,6816190,13330,1,100,N,N,N,CP_Units,TT_Task,DT_FixedDUR2,RV_OK,TK_Complete,EK000MU310,Finalize Water Analysis for Design Basis,,,,0,0,0,0,120,0,0,0,,2005-06-01 00:00,2005-08-16 00:00,2007-01-09 08:01,2007-01-09 08:01,,2007-01-27 00:00,2007-01-27 00:00,,,2005-07-27 08:00,2005-08-16 17:00,,,,,PT_Normal,,,,,TXTyqEBrRoSsxgm3HSwwDA,zGBq8XsreUKHt6BP5n68fR,,,N,0,0,,,2007-02-01 02:43,2007-02-04 01:05,hbe4678,hbe4678,,,0
3982,12460163,14517,6816190,4047,1,100,N,N,N,CP_Drtn,TT_Task,DT_FixedDUR2,RV_OK,TK_Complete,EK000MU25O,Finalize Water Analysis for Design Basis,,,,0,0,0,0,120,0,0,0,,2005-06-01 00:00,2005-08-16 00:00,2007-06-07 08:01,2007-06-07 08:01,,2007-01-27 00:00,2007-01-27 00:00,,,2006-02-27 08:00,2006-03-17 17:00,,,,,PT_Normal,,,,,CmnjnrsnRb6iiafOWyQwcA,,,,N,0,0,,,2007-02-01 02:43,2007-02-04 01:05,hbe4678,hbe4678,,,0
3983,12460164,14517,6816190,4047,1,100,N,N,N,CP_Drtn,TT_Task,DT_FixedDUR2,RV_OK,TK_Complete,EK000MU25B,02G MU225 Develop/Issue Load Sht & Design Data ERW,,,,0,0,0,0,40,0,0,0,,2005-05-23 00:00,2005-06-16 00:00,2007-06-07 08:01,2007-06-07 08:01,,2007-01-27 00:00,2007-01-27 00:00,,,2006-02-27 08:00,2006-03-03 17:00,,,,,PT_Normal,,,,,gFY0g/UBS+iRD96cWvX7iQ,,,,N,0,0,,,2007-02-01 02:43,2007-02-04 01:05,hbe4678,hbe4678,,,0
3984,12460165,14517,6816190,4047,1,100,N,N,N,CP_Drtn,TT_Task,DT_FixedDUR2,RV_OK,TK_Complete,EK000MU11O,Finalize Water Analysis for Design Basis,,,,0,0,0,0,120,0,0,0,,2005-06-01 00:00,2005-08-16 00:00,2007-05-08 08:01,2007-05-08 08:01,,2007-01-27 00:00,2007-01-27 00:00,,,2006-02-06 08:00,2006-02-24 17:00,,,,,PT_Normal,,,,,fUPc853+RpynJgO8DfDscA,,,,N,0,0,,,2007-02-01 02:43,2007-02-04 01:05,hbe4678,hbe4678,,,0
3985,12460166,14517,6816190,4047,1,100,N,N,N,CP_Drtn,TT_Task,DT_FixedDUR2,RV_OK,TK_Complete,EK000MU11B,05B MU311 Develop/Issue Load Sht & Design Data ERW,,,,0,0,0,0,40,0,0,0,,2005-05-23 00:00,2005-06-16 00:00,2007-05-08 08:01,2007-05-08 08:01,,2007-01-27 00:00,2007-01-27 00:00,,,2006-01-30 08:00,2006-02-03 17:00,,,,,PT_Normal,,,,,5wioCdszSM6/fnS9wflRuw,,,,N,0,0,,,2007-02-01 02:43,2007-02-04 01:05,hbe4678,hbe4678,,,0
3986,12460167,14517,6816190,4047,1,100,N,N,N,CP_Drtn,TT_Task,DT_FixedDUR2,RV_OK,TK_Complete,EK000MU32B,01D MU322 Develop/Issue Load Sht & Design Data ERW,,,,0,0,0,0,40,0,0,0,,2005-05-23 00:00,2005-06-16 00:00,2007-04-08 08:01,2007-04-08 08:01,,2007-01-27 00:00,2007-01-27 00:00,,,2006-01-30 08:00,2006-02-03 17:00,,,,,PT_Normal,,,,,nskFl1DjR0yJE5xlIn66kQ,,,,N,0,0,,,2007-02-01 02:43,2007-02-04 01:05,hbe4678,hbe4678,,,0
3987,12460168,14517,6816190,4047,1,100,N,N,N,CP_Drtn,TT_Task,DT_FixedDUR2,RV_OK,TK_Complete,EK000MU32O,Finalize Water Analysis for Design Basis,,,,0,0,0,0,120,0,0,0,,2005-06-01 00:00,2005-08-16 00:00,2007-04-08 08:01,2007-04-08 08:01,,2007-01-27 00:00,2007-01-27 00:00,,,2006-02-06 08:00,2006-02-24 17:00,,,,,PT_Normal,,,,,yIQXCr6VRX+NeYW6vxJSSQ,,,,N,0,0,,,2007-02-01 02:43,2007-02-04 01:05,hbe4678,hbe4678,,,0
3988,12460169,14517,6816190,13330,1,100,N,N,N,CP_Units,TT_Task,DT_FixedDUR2,RV_OK,TK_Complete,EK000SY005,Systems Work Plan & Project Setup,,,,0,0,0,,360,,0,0,,2005-02-21 00:00,2005-04-25 00:00,2009-02-15 08:01,2009-02-15 08:01,,2007-01-27 00:00,2007-01-27 00:00,,,2005-03-07 08:00,2005-05-06 17:00,,,,,PT_Normal,,,,,rWjLtCKgRVu3RbjIQ+Uhkg,,,,N,0,0,,,2007-02-01 02:43,2007-02-04 01:05,hbe4678,hbe4678,,,0
3989,12460170,14517,6816190,13330,1,100,N,N,N,CP_Units,TT_Task,DT_FixedDUR2,RV_OK,TK_Complete,EK000SY010,MEC Convert prelim P&ID's to Smart Plant P&ID's,,,,0,,0,,160,,,0,,2005-02-21 08:00,2005-03-18 17:00,2006-12-25 08:00,2006-12-25 08:00,,2007-01-27 00:00,2007-01-27 00:00,,,2005-02-21 08:00,2005-03-18 17:00,,,,,PT_Normal,,,,,0QuEkYLWTyisA0s+VWepZQ,,,,N,,,,,2007-02-01 02:43,2007-02-04 01:05,hbe4678,hbe4678,,,0
3990,12460171,14517,6816190,13330,1,100,N,N,N,CP_Units,TT_Task,DT_FixedDUR2,RV_OK,TK_Complete,EK000SY015,Develop Utility & offsite block flow diagrams,,,,0,,0,,248,,,0,,2005-03-07 08:00,2005-04-15 17:00,2006-12-25 08:00,2006-12-25 08:00,,2007-01-27 00:00,2007-01-27 00:00,,,2005-03-07 08:00,2005-04-18 17:00,,,,,PT_Normal,,,,,XJ5MCXaSQ0OtFsisHgvYGQ,,,,N,,,,,2007-02-01 02:43,2007-02-04 01:05,hbe4678,hbe4678,,,0
3991,12460172,14517,6816190,13330,1,100,N,N,N,CP_Units,TT_Task,DT_FixedDUR2,RV_OK,TK_Complete,EK000MU41B,Develop & Issue Design Data for ERW - MU410,,,,0,,0,,40,,,0,,2005-04-18 08:00,2005-04-20 17:00,2007-03-07 08:01,2007-03-07 08:01,,2007-01-27 00:00,2007-01-27 00:00,,,2005-04-18 08:00,2005-04-22 17:00,,,,,PT_Normal,,,,,5QZy7YfvQtm6HSVg7DKUBA,,,,N,,,,,2007-02-01 02:43,2007-02-04 01:05,hbe4678,hbe4678,,,0
3992,12460173,14517,6816190,13330,1,100,N,N,N,CP_Units,TT_Task,DT_FixedDUR2,RV_OK,TK_Complete,EK000MU61B,Develop/Issue Load Sht & Design Data ERW - MU611,,,,0,0,0,0,80,0,0,0,,2005-05-02 08:00,2005-06-14 00:00,2007-03-07 08:01,2007-03-07 08:01,,2007-01-27 00:00,2007-01-27 00:00,,,2005-05-02 08:00,2005-05-13 17:00,,,,,PT_Normal,,,,,dL+a1qVkQLyN8etEbhd/xA,,,,N,0,0,,,2007-02-01 02:43,2007-02-04 01:05,hbe4678,hbe4678,,,0
3993,12460174,14517,6816190,13330,1,100,N,N,N,CP_Units,TT_Task,DT_FixedDUR2,RV_OK,TK_Complete,EK000MU35B,Develop & Issue Design Data for ERW - MU350,,,,0,0,0,0,72,0,0,0,,2005-05-31 08:00,2005-06-14 00:00,2007-05-03 08:01,2007-05-03 08:01,,2007-01-27 00:00,2007-01-27 00:00,,,2005-05-31 08:00,2005-06-10 17:00,,,,,PT_Normal,,,,,1drUZRyVSr2jaRu3xKES7g,,,,N,0,0,,,2007-02-01 02:43,2007-02-04 01:05,hbe4678,hbe4678,,,0
3994,12460175,14517,6816190,13330,1,100,N,N,N,CP_Units,TT_Task,DT_FixedDUR2,RV_OK,TK_Complete,EK000MU29B,Develop/Issue Load Sht & Design Data ERW - MU292,,,,0,0,0,0,40,0,0,0,,2005-06-07 08:00,2005-06-20 00:00,2007-05-07 08:00,2007-05-07 08:00,,2007-01-27 00:00,2007-01-27 00:00,,,2005-06-07 08:00,2005-06-13 17:00,,,,,PT_Normal,,,,,9E6Dy/79QB2/npJvYfA6AQ,,,,N,0,0,,,2007-02-01 02:43,2007-02-04 01:05,hbe4678,hbe4678,,,0
3995,12460176,14517,6816190,13330,1,100,N,N,N,CP_Units,TT_Task,DT_FixedDUR2,RV_OK,TK_Complete,EK000MU30B,Develop/Issue Load Sht & Design Data ERW - MU300,,,,0,0,0,0,120,0,0,0,,2005-05-09 08:00,2005-05-26 00:00,2007-01-09 08:01,2007-01-09 08:01,,2007-01-27 00:00,2007-01-27 00:00,,,2005-05-09 08:00,2005-05-27 17:00,,,,,PT_Normal,,,,,Lb/W1CBTTzKc9Ru5kRJMyg,,,,N,0,0,,,2007-02-01 02:43,2007-02-04 01:05,hbe4678,hbe4678,,,0
3996,12460177,14517,6816190,13330,1,100,N,N,N,CP_Units,TT_Task,DT_FixedDUR2,RV_OK,TK_Complete,EK000MU31B,Develop/Issue Load Sht & Design Data ERW - MU310,,,,0,0,0,0,40,0,0,0,,2005-05-23 08:00,2005-06-16 00:00,2007-01-09 08:01,2007-01-09 08:01,,2007-01-27 00:00,2007-01-27 00:00,,,2005-05-23 08:00,2005-05-27 17:00,,,,,PT_Normal,,,,,UiK5Vm9fQouMm4PDUt3Z7Q,,,,N,0,0,,,2007-02-01 02:43,2007-02-04 01:05,hbe4678,hbe4678,,,0
3997,12460178,14517,6816190,13330,1,100,N,N,N,CP_Units,TT_Task,DT_FixedDUR2,RV_OK,TK_Complete,EK000MU33B,Develop/Issue Load Sht & Design Data ERW - MU330,,,,0,0,0,0,40,0,0,0,,2005-06-06 08:00,2005-06-20 00:00,2007-01-09 08:01,2007-01-09 08:01,,2007-01-27 00:00,2007-01-27 00:00,,,2005-06-06 08:00,2005-06-10 17:00,,,,,PT_Normal,,,,,NT+fbEvEQOKHwFZbIpUM/Q,,,,N,0,0,,,2007-02-01 02:43,2007-02-04 01:05,hbe4678,hbe4678,,,0
3998,12460179,14517,6816190,13330,1,100,N,N,N,CP_Units,TT_Task,DT_FixedDUR2,RV_OK,TK_Complete,EK000MU34B,Develop/Issue Load Sht & Design Data ERW - Chlorination Unit,,,,0,0,0,0,40,0,0,0,,2005-07-11 08:00,2005-07-15 17:00,2007-01-09 08:01,2007-01-09 08:01,,2007-01-27 00:00,2007-01-27 00:00,,,2005-07-11 08:00,2005-07-15 17:00,,,,,PT_Normal,,,,,DjN2O/2uQKunmLcCTE9+Mg,,,,N,0,0,,,2007-02-01 02:43,2007-02-04 01:05,hbe4678,hbe4678,,,0
3999,12460180,14517,6816191,13330,1,100,N,N,N,CP_Units,TT_Task,DT_FixedDUR2,RV_OK,TK_Complete,EK000AR020,Gather Bldg Requirements & Coordinate w/ Constr,,,,0,0,0,,160,,0,0,,2005-02-21 08:00,2005-05-13 00:00,2009-02-15 08:01,2009-02-15 08:01,,2007-01-27 00:00,2007-01-27 00:00,,,2005-03-28 08:00,2005-04-22 17:00,,,,,PT_Normal,,,,,EemJZCGaTVugHG0Kr6Hxgg,,,,N,0,0,,,2007-02-01 02:43,2007-02-04 01:05,hbe4678,hbe4678,,,0
4000,12460181,14517,6816192,13330,1,100,N,N,N,CP_Units,TT_Task,DT_FixedDUR2,RV_OK,TK_Complete,EK000PE085,Participate in Escalation confirmation effort,,,,0,,0,,152,,,0,,2005-02-21 08:00,2005-03-31 17:00,2009-02-15 08:01,2009-02-15 08:01,,2007-01-27 00:00,2007-01-27 00:00,,,2005-02-21 08:00,2005-03-17 17:00,,,,,PT_Normal,,,,,bkos1Xr4T32yGWnektokzw,,,,N,,,,,2007-02-01 02:43,2007-02-04 01:05,hbe4678,hbe4678,,,0
4001,12460182,14517,6816192,13330,1,100,N,N,N,CP_Units,TT_Task,DT_FixedDUR2,RV_OK,TK_Complete,EK000PE090,Develop & Issue Engineering Plan,,,,0,,0,,120,,,0,,2005-03-14 08:00,2005-04-01 17:00,2006-12-25 08:00,2006-12-25 08:00,,2007-01-27 00:00,2007-01-27 00:00,,,2005-03-14 08:00,2005-04-01 17:00,,,,,PT_Normal,,,,,z8fZ4ytbS+KjkOH1h6dc5A,,,,N,,,,,2007-02-01 02:43,2007-02-04 01:05,hbe4678,hbe4678,,,0
4002,12460183,14517,6816192,13330,1,100,N,N,N,CP_Units,TT_Task,DT_FixedDUR2,RV_OK,TK_Complete,EK000PE110,Issue Draft Project Design Data,,,,0,,0,,120,,,0,,2005-03-07 08:00,2005-04-05 17:00,2009-02-15 08:01,2009-02-15 08:01,,2007-01-27 00:00,2007-01-27 00:00,,,2005-03-07 08:00,2005-03-25 17:00,,,,,PT_Normal,,,,,qC0QZiinSlmOMQ8JoTHlUQ,,,,N,,,,,2007-02-01 02:43,2007-02-04 01:05,hbe4678,hbe4678,,,0
4003,12460184,14517,6816192,13330,1,100,N,N,N,CP_Units,TT_Task,DT_FixedDUR2,RV_OK,TK_Complete,EK000PE125,Preliminary Issue - Equipment List,,,,0,,0,,80,,,0,,2005-02-28 08:00,2005-03-14 17:00,2006-11-28 08:01,2006-11-28 08:01,,2007-01-27 00:00,2007-01-27 00:00,,,2005-02-28 08:00,2005-03-11 17:00,,,,,PT_Normal,,,,,diru5keWSq20lqGVLevt1Q,,,,N,,,,,2007-02-01 02:43,2007-02-04 01:05,hbe4678,hbe4678,,,0
4004,12460185,14517,6816192,13330,1,100,N,N,N,CP_Units,TT_Task,DT_FixedDUR2,RV_OK,TK_Complete,EK000PE010,Publish Unit conversion standard,,,,0,,0,,80,,,0,,2005-03-07 08:00,2005-03-18 17:00,2009-02-15 08:01,2009-02-15 08:01,,2007-01-27 00:00,2007-01-27 00:00,,,2005-03-07 08:00,2005-03-18 17:00,,,,,PT_Normal,,,,,8M23LCyETRGxu0PNYsu3Og,,,,N,,,,,2007-02-01 02:43,2007-02-04 01:05,hbe4678,hbe4678,,,0
4005,12460186,14517,6816192,13330,1,100,N,N,N,CP_Units,TT_Task,DT_FixedDUR2,RV_OK,TK_Complete,EK000PE040,Devlop & Issue List of Project Specs & Standards,,,,0,,0,,120,,,0,,2005-03-07 08:00,2005-03-18 17:00,2009-02-15 08:01,2009-02-15 08:01,,2007-01-27 00:00,2007-01-27 00:00,,,2005-03-07 08:00,2005-03-25 17:00,,,,,PT_Normal,,,,,3KdUEEEYS6yY9FWPlMuyRA,,,,N,,,,,2007-02-01 02:43,2007-02-04 01:05,hbe4678,hbe4678,,,0
4006,12460187,14517,6816192,13330,1,100,N,N,N,CP_Units,TT_Task,DT_FixedDUR2,RV_OK,TK_Complete,EK000PE050,Confirm of Split of Work for MEC,,,,0,,0,,128,,,0,,2005-03-04 08:00,2005-03-25 17:00,2009-02-15 08:01,2009-02-15 08:01,,2007-01-27 00:00,2007-01-27 00:00,,,2005-03-04 08:00,2005-03-25 17:00,,,,,PT_Normal,,,,,Zstea55ZQHKFUsxEWpcl4w,,,,N,,,,,2007-02-01 02:43,2007-02-04 01:05,hbe4678,hbe4678,,,0
4007,12460188,14517,6816192,13330,1,100,N,N,N,CP_Units,TT_Task,DT_FixedDUR2,RV_OK,TK_Complete,EK000PE060,Define Task Force Area in MEC,,,,0,,0,,40,,,0,,2005-03-28 08:00,2005-03-30 17:00,2009-02-15 08:01,2009-02-15 08:01,,2007-01-27 00:00,2007-01-27 00:00,,,2005-03-28 08:00,2005-04-01 17:00,,,,,PT_Normal,,,,,gB6fmflZRsufAS6xQs2rcA,,,,N,,,,,2007-02-01 02:43,2007-02-04 01:05,hbe4678,hbe4678,,,0
4008,12460189,14517,6816192,13330,1,100,N,N,N,CP_Units,TT_Task,DT_FixedDUR2,RV_OK,TK_Complete,EK000PE070,Kick-off meeting at MEC,,,,0,0,0,0,16,0,0,0,,2005-09-21 08:00,2005-09-22 17:00,2009-02-15 08:01,2009-02-15 08:01,,2007-01-27 00:00,2007-01-27 00:00,,,2005-09-21 08:00,2005-09-22 17:00,,,,,PT_Normal,,,,,Jv/NwVwVQYSxndZBb4RLGg,,,,N,0,0,,,2007-02-01 02:43,2007-02-04 01:05,hbe4678,hbe4678,,,0
4009,12460190,14517,6816192,13330,1,100,N,N,N,CP_Units,TT_Task,DT_FixedDUR2,RV_OK,TK_Complete,EK000PE075,MEC Organization Chart,,,,0,,0,,40,,,0,,2005-03-28 08:00,2005-03-30 17:00,2009-02-15 08:01,2009-02-15 08:01,,2007-01-27 00:00,2007-01-27 00:00,,,2005-03-28 08:00,2005-04-01 17:00,,,,,PT_Normal,,,,,R2RExrr/SZaMphxzi/TrdQ,,,,N,,,,,2007-02-01 02:43,2007-02-04 01:05,hbe4678,hbe4678,,,0
4010,12460191,14517,6816204,13329,0,0,N,N,N,CP_Units,TT_FinMile,DT_FixedDrtn,RV_OK,TK_NotStart,ZZ2120,02L Recv. at Site - 107-C Exchanger,,640,759.983333333333,0,0,0,0,0,0,0,0,,,,2007-07-02 08:01,2007-07-02 08:01,,2007-03-31 08:01,2007-03-31 08:01,2007-03-31 08:01,2007-03-31 08:01,2007-03-31 08:01,2007-03-31 08:01,,2007-07-02 08:01,2007-07-02 08:01,,PT_Normal,,,,,cSeZR6xwTeysKZ0/gvLR6A,Vd1byK7tSpeWz5XRJHoD1g,,,N,0,0,,,2007-02-01 02:43,2007-02-04 01:00,hbe4678,hbe4678,2007-03-31 08:01,2007-03-31 08:01,0
4011,12460192,14517,6816204,13329,0,0,N,N,N,CP_Units,TT_FinMile,DT_FixedDUR2,RV_OK,TK_NotStart,PK05AMJ35Z,05A Recv. at Site - 2106-J & 2107-J Pumps,,1680,319.983333333333,0,0,0,0,0,0,0,0,,,,2007-12-02 08:01,2007-12-02 08:01,,2007-03-10 08:01,2007-03-10 08:01,2007-03-10 08:01,2007-03-10 08:01,2007-03-10 08:01,2007-03-10 08:01,,2007-12-02 08:01,2007-12-02 08:01,,PT_Normal,,,,,Te1cKYjiTDiROvXKr1iFoQ,JkXd7n0CnEuAxZy5L2ZP/g,,,N,0,0,,,2007-02-01 02:43,2007-02-04 01:00,hbe4678,hbe4678,2007-03-10 08:01,2007-03-10 08:01,0
4012,12460193,14517,6816204,13329,0,0,N,N,N,CP_Units,TT_FinMile,DT_FixedDUR2,RV_OK,TK_NotStart,PK020MC31I,02N Recv. at Site - 121-C (Heavy Lift),,880,431.983333333333,0,0,0,0,0,0,0,0,,,,2007-09-10 08:01,2007-09-10 08:01,,2007-05-05 08:01,2007-05-05 08:01,2007-05-05 08:01,2007-05-05 08:01,2007-05-05 08:01,2007-05-05 08:01,,2007-09-10 08:01,2007-09-10 08:01,,PT_Normal,,,,,ZyfGhd+pRnuD4hjm0I0//Q,6pYd6DicGkSVyXyy7r2FBR,,,N,0,0,,,2007-02-01 02:43,2007-02-04 01:00,hbe4678,hbe4678,2007-05-05 08:01,2007-05-05 08:01,0
4013,12460194,14517,6816204,13329,0,100,N,N,N,CP_Units,TT_FinMile,DT_FixedDUR2,RV_OK,TK_Complete,PK000I1272,Recv on Site Magnetic Flow Meters,,,,0,0,0,0,0,0,0,0,,2006-12-29 00:00,2006-12-29 00:00,2009-02-15 08:01,2009-02-15 08:01,,2007-01-27 00:00,2007-01-27 00:00,,,2007-02-20 17:00,2007-02-20 17:00,,,,,PT_Normal,,,,,QpVwK8T/Rv+JAHgzj5AqRQ,dobwr9xmgEqsUhahElhZjx,,,N,0,0,,,2007-02-01 02:43,2007-02-04 01:05,hbe4678,hbe4678,,,0
4014,12460195,14517,6816204,13329,0,100,N,N,N,CP_Units,TT_FinMile,DT_FixedDUR2,RV_OK,TK_Complete,PK000I1222,Coriolis Meters - Recv on Site,,,,0,0,0,0,0,0,0,0,,2006-08-16 00:00,2006-08-16 00:00,2009-02-15 08:01,2009-02-15 08:01,,2007-01-27 00:00,2007-01-27 00:00,,,2007-03-26 17:00,2007-03-26 17:00,,,,,PT_Normal,,,,,DJHWxNJPS52QkEoBNAwoeQ,dobwr9xmgEqsUhahElhZjx,,,N,0,0,,,2007-02-01 02:43,2007-02-04 01:05,hbe4678,hbe4678,,,0
4015,12460196,14517,6816204,13329,0,100,N,N,N,CP_Units,TT_FinMile,DT_FixedDUR2,RV_OK,TK_Complete,PK02LMC23A,02L Recv. at Site - 106-C & 109-C Exchangers,,,,0,0,0,0,0,0,0,0,,2006-09-16 00:00,2006-09-16 00:00,2007-07-02 08:01,2007-07-02 08:01,,2007-01-27 00:00,2007-01-27 00:00,,,2006-09-21 08:01,2006-09-21 08:01,,,,,PT_Normal,,,,,dmQ1NygRTNmR7ZSevtWwIg,kw4Hg6xOK0ST2E0HimTWrR,,,N,0,0,,,2007-02-01 02:43,2007-02-04 01:05,hbe4678,hbe4678,,,0
4016,12460197,14517,6816204,13329,0,100,N,N,N,CP_Units,TT_FinMile,DT_FixedDUR2,RV_OK,TK_Complete,PK02KMD45A,02K Recv. at Site - Equip. 115-F,,,,0,0,0,0,0,0,0,0,,2006-09-16 00:00,2006-09-16 00:00,2007-10-20 08:01,2007-10-20 08:01,,2007-01-27 00:00,2007-01-27 00:00,,,2006-09-21 08:01,2006-09-21 08:01,,,,,PT_Normal,,,,,olymKY6TSIyffyRzoAEadg,PKLAy4ogy0qTHeyQEjgzdx,,,N,0,0,,,2007-02-01 02:43,2007-02-04 01:05,hbe4678,hbe4678,,,0
4017,12460198,14517,6816204,13329,0,0,N,N,N,CP_Units,TT_FinMile,DT_FixedDUR2,RV_OK,TK_NotStart,PK000MD112,MD305 Merc. Removal Bed - Recieve at Site,,1328,151.983333333333,0,0,0,0,0,0,0,0,,,,2008-01-09 08:01,2008-01-09 08:01,,2007-06-02 08:01,2007-06-02 08:01,2007-06-02 08:01,2007-06-02 08:01,2007-06-02 08:01,2007-06-02 08:01,,2008-01-09 08:01,2008-01-09 08:01,,PT_Normal,,,,,PgAqJYXPTni8u5L6+0PILw,hbrFuncozUC7ZY3Ul0X8Kx,,,N,0,0,,,2007-02-01 02:43,2007-02-04 01:00,hbe4678,hbe4678,2007-06-02 08:01,2007-06-02 08:01,0
4018,12460199,14517,6816204,13329,0,100,N,N,N,CP_Units,TT_FinMile,DT_FixedDUR2,RV_OK,TK_Complete,PK02EMC23S,02E Recv. at Site - 114-C Exchangers,,,,0,0,0,0,0,0,0,0,,2006-12-09 00:00,2006-12-09 00:00,2008-02-02 08:01,2008-02-02 08:01,,2007-01-27 00:00,2007-01-27 00:00,,,2007-01-20 08:01,2007-01-20 08:01,,,,,PT_Normal,,,,,CDKeZkalQ/aAPYSdMZsI7Q,RbjkNPlse0KuNxnRKSyIjx,,,N,0,0,,,2007-02-01 02:43,2007-02-04 01:05,hbe4678,hbe4678,,,0
4019,12460200,14517,6816204,13329,0,0,N,N,N,CP_Units,TT_FinMile,DT_FixedDUR2,RV_OK,TK_NotStart,PK02LMC23S,02L Recv. at Site - 111-C Exchangers,,1920,903.983333333333,0,0,0,0,0,0,0,0,,,,2008-02-02 08:01,2008-02-02 08:01,,2007-03-31 08:01,2007-03-31 08:01,2007-03-31 08:01,2007-03-31 08:01,2007-03-31 08:01,2007-03-31 08:01,,2008-02-02 08:01,2008-02-02 08:01,,PT_Normal,,,,,8wJ1my1tRQWcupgLIs1wsQ,kw4Hg6xOK0ST2E0HimTWrR,,,N,0,0,,,2007-02-01 02:43,2007-02-04 01:00,hbe4678,hbe4678,2007-03-31 08:01,2007-03-31 08:01,0
4020,12460201,14517,6816204,13329,0,0,N,N,N,CP_Units,TT_FinMile,DT_FixedDUR2,RV_OK,TK_NotStart,PK020PR20S,PR201 KAAP Catalyst -  Recv. at Site,,248.016666666667,0,0,0,0,0,0,0,0,0,,,,2008-03-19 08:01,2008-03-19 08:01,,2008-02-11 17:00,2008-02-11 17:00,2008-02-11 17:00,2008-02-11 17:00,2008-02-11 17:00,2008-02-11 17:00,,2008-03-19 08:01,2008-03-19 08:01,,PT_Normal,,,,,PzivuxYoRbiebXrXlBFpvA,dGXkP2F/QkWyhm+z9T2Zeh,,,N,0,0,,,2007-02-01 02:43,2007-02-04 01:00,hbe4678,hbe4678,2008-02-11 17:00,2008-02-11 17:00,0
4021,12460202,14517,6816204,13329,0,0,N,N,N,CP_Units,TT_FinMile,DT_FixedDUR2,RV_OK,TK_NotStart,PK02LMD21Y,02L Recv. at Site - 102-E (Heavy Lift),,608,0,0,0,0,0,0,0,0,0,,,,2007-08-15 08:01,2007-08-15 08:01,,2007-05-19 08:01,2007-05-19 08:01,2007-05-19 08:01,2007-05-19 08:01,2007-05-19 08:01,2007-05-19 08:01,,2007-08-15 08:01,2007-08-15 08:01,,PT_Normal,,,,,HqgRCWpfSbamyigzjVpW4g,t6AFt/H7+0i+3yslxcuqER,,,N,0,0,,,2007-02-01 02:43,2007-02-04 01:00,hbe4678,hbe4678,2007-05-19 08:01,2007-05-19 08:01,0
4022,12460203,14517,6816204,4050,0,0,N,N,N,CP_Drtn,TT_FinMile,DT_FixedDrtn,RV_OK,TK_NotStart,PK02GMU26Z,02G MU225 Recv. at Site - LIFT STATION,,2416.01666666667,248,0,0,0,0,0,0,0,0,,,,2008-01-27 08:01,2008-01-27 08:01,,2007-03-30 17:00,2007-03-30 17:00,2007-03-30 17:00,2007-03-30 17:00,2007-03-30 17:00,2007-03-30 17:00,,2008-01-27 08:01,2008-01-27 08:01,,PT_Normal,,,,,EAzxa/etQr2qZrtunF22LA,,,,N,0,0,,,2007-02-01 02:43,2007-02-04 01:00,hbe4678,hbe4678,2007-03-30 17:00,2007-03-30 17:00,0
4023,12460204,14517,6816204,13329,0,100,N,N,N,CP_Units,TT_FinMile,DT_FixedDUR2,RV_OK,TK_Complete,PK000MD44Q,02D Recv. at Site - 107-F Ammonia Letdown Drum,,,,0,0,0,0,0,0,0,0,,2006-09-16 00:00,2006-09-16 00:00,2007-12-29 08:01,2007-12-29 08:01,,2007-01-27 00:00,2007-01-27 00:00,,,2006-09-21 08:01,2006-09-21 08:01,,,,,PT_Normal,,,,,CQ+RiHLGQYOrRA1rcAX4aQ,tOrD/wXLZ0yM8TnE0FcbqB,,,N,0,0,,,2007-02-01 02:43,2007-02-04 01:05,hbe4678,hbe4678,,,0
4024,12460205,14517,6816204,13329,0,100,N,N,N,CP_Units,TT_FinMile,DT_FixedDrtn,RV_OK,TK_Complete,PK02AMD22D,02A Recv. at Site - 104-E Tower,,,,0,0,0,0,0,0,0,0,2006-12-16 08:01,2006-12-09 00:00,2006-12-09 00:00,2008-01-17 08:01,2008-01-17 08:01,,2007-01-27 00:00,2007-01-27 00:00,,,2007-01-20 08:01,2007-01-20 08:01,,,,CS_MEOA,PT_Normal,,,,,vSjgJXmxQcmqk8NslmVTyw,hbrFuncozUC7ZY3Ul0X8Kx,,,N,0,0,,,2007-02-01 02:43,2007-02-04 01:05,hbe4678,hbe4678,,,0
4025,12460206,14517,6816204,13329,0,0,N,N,N,CP_Units,TT_FinMile,DT_FixedDUR2,RV_OK,TK_NotStart,PK01BMJ35Z,"01B Recv. at Site - 2001-JA/JB/JC, 2003-J, 2004-J/JA & 2007-J/JA Pumps",,1680,319.983333333333,0,0,0,0,0,0,0,0,,,,2007-12-02 08:01,2007-12-02 08:01,,2007-03-10 08:01,2007-03-10 08:01,2007-03-10 08:01,2007-03-10 08:01,2007-03-10 08:01,2007-03-10 08:01,,2007-12-02 08:01,2007-12-02 08:01,,PT_Normal,,,,,uCUomy0lSDOozS8wxsRGrw,P0Z3S1atYUGjliypdozSgh,,,N,0,0,,,2007-02-01 02:43,2007-02-04 01:00,hbe4678,hbe4678,2007-03-10 08:01,2007-03-10 08:01,0
4026,12460207,14517,6816204,13329,0,0,N,N,N,CP_Units,TT_FinMile,DT_FixedDUR2,RV_OK,TK_NotStart,PK03CMJ35Z,03C Recv. at Site - 2005-J/JA & 2006-J/JA Pumps,,1680,319.983333333333,0,0,0,0,0,0,0,0,,,,2007-12-02 08:01,2007-12-02 08:01,,2007-03-10 08:01,2007-03-10 08:01,2007-03-10 08:01,2007-03-10 08:01,2007-03-10 08:01,2007-03-10 08:01,,2007-12-02 08:01,2007-12-02 08:01,,PT_Normal,,,,,sk+zc0OSTgejxetkr+RJJQ,MTk17L3cUkixTpMfJIUw2w,,,N,0,0,,,2007-02-01 02:43,2007-02-04 01:00,hbe4678,hbe4678,2007-03-10 08:01,2007-03-10 08:01,0
4027,12460208,14517,6816204,13329,0,0,N,N,N,CP_Units,TT_FinMile,DT_FixedDUR2,RV_OK,TK_NotStart,PK03DMJ35Z,03D Recv. at Site - 2002-J/JA Pumps,,1680,319.983333333333,0,0,0,0,0,0,0,0,,,,2007-12-02 08:01,2007-12-02 08:01,,2007-03-10 08:01,2007-03-10 08:01,2007-03-10 08:01,2007-03-10 08:01,2007-03-10 08:01,2007-03-10 08:01,,2007-12-02 08:01,2007-12-02 08:01,,PT_Normal,,,,,HQ3/eTrfRPm50mfMeE5bDw,nS5y++rxUEyPEKpNwTQR4w,,,N,0,0,,,2007-02-01 02:43,2007-02-04 01:00,hbe4678,hbe4678,2007-03-10 08:01,2007-03-10 08:01,0
4028,12460209,14517,6816204,13329,0,100,N,N,N,CP_Units,TT_FinMile,DT_FixedDrtn,RV_OK,TK_Complete,PK02CMC21Z,"02C Recv. at Site - 128-C, 134-C, 167-C Exchangers",,,,0,0,0,0,0,0,0,0,,2006-12-09 00:00,2006-12-09 00:00,2008-02-19 08:01,2008-02-19 08:01,,2007-01-27 00:00,2007-01-27 00:00,,,2007-01-20 08:01,2007-01-20 08:01,,,,,PT_Normal,,,,,WpvzmfvCSbOzmWjG9wX73Q,,,,N,0,0,,,2007-02-01 02:43,2007-02-04 01:05,hbe4678,hbe4678,,,0
4029,12460210,14517,6816204,13329,0,100,N,N,N,CP_Units,TT_FinMile,DT_FixedDUR2,RV_OK,TK_Complete,PK02CMJ21Z,02C Recv. at Site - 103-J & 105-J,,,,0,0,0,0,0,0,0,0,,2006-12-14 17:00,2006-12-14 17:00,2007-08-25 08:01,2007-08-25 08:01,,2007-01-27 00:00,2007-01-27 00:00,,,2007-01-22 17:00,2007-01-22 17:00,,,,,PT_Normal,,,,,libCnT1aSAWxyGMBeC9gBg,,,,N,0,0,,,2007-02-01 02:43,2007-02-04 01:05,hbe4678,hbe4678,,,0
4030,12460211,14517,6816204,13329,0,0,N,N,N,CP_Units,TT_FinMile,DT_FixedDUR2,RV_OK,TK_NotStart,PK02CMJ35Z,02C Recv. at Site - 112-J/JA Pumps,,1640.01666666667,0,0,0,0,0,0,0,0,0,,,,2008-01-17 08:01,2008-01-17 08:01,,2007-04-24 17:00,2007-04-24 17:00,2007-04-24 17:00,2007-04-24 17:00,2007-04-24 17:00,2007-04-24 17:00,,2008-01-17 08:01,2008-01-17 08:01,,PT_Normal,,,,,AF0J85W5TNmuwm0njQD2/Q,,,,N,0,0,,,2007-02-01 02:43,2007-02-04 01:00,hbe4678,hbe4678,2007-04-24 17:00,2007-04-24 17:00,0
4031,12460212,14517,6816204,13329,0,100,N,N,N,CP_Units,TT_FinMile,DT_FixedDUR2,RV_OK,TK_Complete,PK02CMJ75Z,02C Recv. at Site - 103-JTC Surface Condenser,,,,0,0,0,0,0,0,0,0,,2006-09-16 00:00,2006-09-16 00:00,2008-02-18 08:01,2008-02-18 08:01,,2007-01-27 00:00,2007-01-27 00:00,,,2006-11-28 17:00,2006-11-28 17:00,,,,,PT_Normal,,,,,2coyGORyRj+sN95BLJk41g,,,,N,0,0,,,2007-02-01 02:43,2007-02-04 01:05,hbe4678,hbe4678,,,0
4032,12460213,14517,6816204,13329,0,100,N,N,N,CP_Units,TT_FinMile,DT_FixedDUR2,RV_OK,TK_Complete,PK02HMB21Z,02H Recv. at Site - 101-B Siding,,,,0,0,0,0,0,0,0,0,,2006-09-16 00:00,2006-09-16 00:00,2007-12-17 08:01,2007-12-17 08:01,,2007-01-27 00:00,2007-01-27 00:00,,,2006-09-21 08:01,2006-09-21 08:01,,,,,PT_Normal,,,,,bbOXHQf0R3Seb1vnbphSOA,,,,N,0,0,,,2007-02-01 02:43,2007-02-04 01:05,hbe4678,hbe4678,,,0
4033,12460214,14517,6816204,13329,0,100,N,N,N,CP_Units,TT_FinMile,DT_FixedDrtn,RV_OK,TK_Complete,PK02HMB42Z,02H Recv. at Vendor - 101-B Cast Peep Sites,,,,0,0,0,0,0,0,0,0,,2006-12-01 00:00,2006-12-01 00:00,2008-04-05 08:01,2008-04-05 08:01,,2007-01-27 00:00,2007-01-27 00:00,,,2007-02-10 08:01,2007-02-10 08:01,,,,,PT_Normal,,,,,/g7OYZ34T8mnavwuq4bUWg,,,,N,0,0,,,2007-02-01 02:43,2007-02-04 01:05,hbe4678,hbe4678,,,0
4034,12460215,14517,6816204,13329,0,0,N,N,N,CP_Units,TT_FinMile,DT_FixedDUR2,RV_OK,TK_NotStart,PK02HMB51Z,02H Recv. at Site - 101-B Insulation,,1752.01666666667,360,0,0,0,0,0,0,0,0,,,,2008-01-12 08:01,2008-01-12 08:01,,2007-04-02 17:00,2007-04-02 17:00,2007-04-02 17:00,2007-04-02 17:00,2007-04-02 17:00,2007-04-02 17:00,,2008-01-12 08:01,2008-01-12 08:01,,PT_Normal,,,,,vmU8FyAES+2nSmgJ19ew9g,,,,N,0,0,,,2007-02-01 02:43,2007-02-04 01:00,hbe4678,hbe4678,2007-04-02 17:00,2007-04-02 17:00,0
4035,12460216,14517,6816204,13329,0,100,N,N,N,CP_Units,TT_FinMile,DT_FixedDUR2,RV_OK,TK_Complete,PK02HMB61Z,02H Recv. at Site - 101-B Burners,,,,0,0,0,0,0,0,0,0,,2006-09-16 17:00,2006-09-16 17:00,2007-09-19 08:01,2007-09-19 08:01,,2007-01-27 00:00,2007-01-27 00:00,,,2006-09-21 08:01,2006-09-21 08:01,,,,,PT_Normal,,,,,WxSeIVuHS0a5rDT3IShAQQ,,,,N,0,0,,,2007-02-01 02:43,2007-02-04 01:05,hbe4678,hbe4678,,,0
4036,12460217,14517,6816204,13329,0,0,N,N,N,CP_Units,TT_FinMile,DT_FixedDUR2,RV_OK,TK_NotStart,PK02HMB62Z,02H Recv. at Site - 101-B ID & FD Fans,,1872,0,0,0,0,0,0,0,0,0,,,,2008-02-02 08:01,2008-02-02 08:01,,2007-04-07 08:01,2007-04-07 08:01,2007-04-07 08:01,2007-04-07 08:01,2007-04-07 08:01,2007-04-07 08:01,,2008-02-02 08:01,2008-02-02 08:01,,PT_Normal,,,,,q5OwznarSOuORdkho9faRg,,,,N,0,0,,,2007-02-01 02:43,2007-02-04 01:00,hbe4678,hbe4678,2007-04-07 08:01,2007-04-07 08:01,0
4037,12460218,14517,6816204,13329,0,100,N,N,N,CP_Units,TT_FinMile,DT_FixedDrtn,RV_OK,TK_Complete,PK000MB33Z,02H Recv. at Site - 101-B Riser Transition,,,,0,0,0,0,0,0,0,0,,2006-12-09 00:00,2006-12-09 00:00,2007-12-03 08:01,2007-12-03 08:01,,2007-01-27 00:00,2007-01-27 00:00,,,2007-02-24 08:01,2007-02-24 08:01,,,,,PT_Normal,,,,,jGPrGfcKQCmstquY2rAMnA,,,,N,0,0,,,2007-02-01 02:43,2007-02-04 01:05,hbe4678,hbe4678,,,0
4038,12460219,14517,6816204,13329,0,0,N,N,N,CP_Units,TT_FinMile,DT_FixedDUR2,RV_OK,TK_NotStart,PK000I1141,Venturis - Recv on Site,,4688.01666666667,456.016666666667,0,0,0,0,0,0,0,0,,,,2009-02-15 08:01,2009-02-15 08:01,,2007-03-05 17:00,2007-03-05 17:00,2007-03-05 17:00,2007-03-05 17:00,2007-03-05 17:00,2007-03-05 17:00,,2009-02-15 08:01,2009-02-15 08:01,,PT_Normal,,,,,mulbPqpPSMyVunYX5/un4A,KugaZHSzg0q5RlN+Kbe3Ix,,,N,0,0,,,2007-02-01 02:43,2007-02-04 01:00,hbe4678,hbe4678,2007-03-05 17:00,2007-03-05 17:00,0
4039,12460220,14517,6816204,13329,0,100,N,N,N,CP_Units,TT_FinMile,DT_FixedDUR2,RV_OK,TK_Complete,PK000I1105,020 Orific Plates - Recv on Site,,,,0,0,0,0,0,0,0,0,,2006-12-07 00:00,2006-12-07 00:00,2009-02-15 08:01,2009-02-15 08:01,,2007-01-27 00:00,2007-01-27 00:00,,,2007-01-27 08:01,2007-01-27 08:01,,,,,PT_Normal,,,,,i4sUl7eTRuiK1DUayMVZgg,KugaZHSzg0q5RlN+Kbe3Ix,,,N,0,0,,,2007-02-01 02:43,2007-02-04 01:05,hbe4678,hbe4678,,,0
4040,12460221,14517,6816204,13329,0,0,N,N,N,CP_Units,TT_Mile,DT_FixedDrtn,RV_OK,TK_NotStart,PK000I612L,Recv at Site - Differential Pressure Gauges,,272,112,0,0,0,0,0,0,0,0,,,,2007-07-09 08:00,2007-07-09 08:00,,2007-05-30 08:00,2007-05-30 08:00,2007-05-30 08:00,2007-05-30 08:00,2007-05-30 08:00,2007-05-30 08:00,,2007-07-09 08:00,2007-07-09 08:00,,PT_Normal,,,,,h8kPi3M3S7+bWjns+RuVOQ,2TLg5qNiLkOTj2N9cUjSkR,,,N,0,0,,,2007-02-01 02:43,2007-02-01 02:43,hbe4678,hbe4678,2007-05-30 08:00,2007-05-30 08:00,0
4041,12460222,14517,6816204,13329,0,0,N,N,N,CP_Units,TT_Mile,DT_FixedDrtn,RV_OK,TK_NotStart,PK000I621L,Recv at Site - Temperature Elements,,304,144,0,0,0,0,0,0,0,0,,,,2007-07-09 08:00,2007-07-09 08:00,,2007-05-26 08:00,2007-05-26 08:00,2007-05-26 08:00,2007-05-26 08:00,2007-05-26 08:00,2007-05-26 08:00,,2007-07-09 08:00,2007-07-09 08:00,,PT_Normal,,,,,eTwC1vaVQayuUgLAh7WYGw,2TLg5qNiLkOTj2N9cUjSkR,,,N,0,0,,,2007-02-01 02:43,2007-02-01 02:43,hbe4678,hbe4678,2007-05-26 08:00,2007-05-26 08:00,0
4042,12460223,14517,6816204,13329,0,0,N,N,N,CP_Units,TT_Mile,DT_FixedDrtn,RV_OK,TK_NotStart,PK000I611L,Recv at Site - Pressure Gauges - ISBL,,1072,912,0,0,0,0,0,0,0,0,,,,2007-07-09 08:00,2007-07-09 08:00,,2007-02-03 08:00,2007-02-03 08:00,2007-02-03 08:00,2007-02-03 08:00,2007-02-03 08:00,2007-02-03 08:00,,2007-07-09 08:00,2007-07-09 08:00,,PT_Normal,,,,,BXclrAE8TvuANN1fRU6N6A,2TLg5qNiLkOTj2N9cUjSkR,,,N,0,0,,,2007-02-01 02:43,2007-02-01 02:43,hbe4678,hbe4678,2007-02-03 08:00,2007-02-03 08:00,0
4043,12460224,14517,6816204,13329,0,0,N,N,N,CP_Units,TT_Mile,DT_FixedDrtn,RV_OK,TK_NotStart,PK000I617L,Recv at Site - Magnetic Lvl Gauges,,1000,840,0,0,0,0,0,0,0,0,,,,2007-07-09 08:00,2007-07-09 08:00,,2007-02-13 08:00,2007-02-13 08:00,2007-02-13 08:00,2007-02-13 08:00,2007-02-13 08:00,2007-02-13 08:00,,2007-07-09 08:00,2007-07-09 08:00,,PT_Normal,,,,,RST/SMn0SCSybIgPTKCUSw,2TLg5qNiLkOTj2N9cUjSkR,,,N,0,0,,,2007-02-01 02:43,2007-02-01 02:43,hbe4678,hbe4678,2007-02-13 08:00,2007-02-13 08:00,0
4044,12460225,14517,6816204,13329,0,0,N,N,N,CP_Units,TT_Mile,DT_FixedDrtn,RV_OK,TK_NotStart,PK000I623L,Recv at Site - Multi-Point Thermocouples,,808,648,0,0,0,0,0,0,0,0,,,,2007-07-09 08:00,2007-07-09 08:00,,2007-03-13 08:00,2007-03-13 08:00,2007-03-13 08:00,2007-03-13 08:00,2007-03-13 08:00,2007-03-13 08:00,,2007-07-09 08:00,2007-07-09 08:00,,PT_Normal,,,,,kPtadXnjQeO5Zer7j+APSA,2TLg5qNiLkOTj2N9cUjSkR,,,N,0,0,,,2007-02-01 02:43,2007-02-01 02:43,hbe4678,hbe4678,2007-03-13 08:00,2007-03-13 08:00,0
4045,12460226,14517,6816204,13329,0,100,N,N,N,CP_Units,TT_Mile,DT_FixedDrtn,RV_OK,TK_Complete,PK000I616L,Recv at Site - Steam Drum Lvl Gauges,,,,0,0,0,0,0,0,0,0,,2007-01-10 00:00,2007-01-10 00:00,2007-07-09 08:00,2007-07-09 08:00,,2007-01-27 00:00,2007-01-27 00:00,,,2007-01-20 08:00,2007-01-20 08:00,,,,,PT_Normal,,,,,34kg9X8dQ9O97IyZdC01sQ,2TLg5qNiLkOTj2N9cUjSkR,,,N,0,0,,,2007-02-01 02:43,2007-02-04 01:05,hbe4678,hbe4678,,,0
4046,12460227,14517,6816204,13329,0,0,N,N,N,CP_Units,TT_FinMile,DT_FixedDUR2,RV_OK,TK_NotStart,PK000I2335,On/Off Valves - Recv on Site,,4232,0,0,0,0,0,0,0,0,0,,,,2009-02-15 08:01,2009-02-15 08:01,,2007-05-12 08:01,2007-05-12 08:01,2007-05-12 08:01,2007-05-12 08:01,2007-05-12 08:01,2007-05-12 08:01,,2009-02-15 08:01,2009-02-15 08:01,,PT_Normal,,,,,H15zpL83QfWCsOdkfV0ATg,4sQ9RUFsokG6zkStLw+XTh,,,N,0,0,,,2007-02-01 02:43,2007-02-04 01:00,hbe4678,hbe4678,2007-05-12 08:01,2007-05-12 08:01,0
4047,12460228,14517,6816204,13329,0,100,N,N,N,CP_Units,TT_FinMile,DT_FixedDUR2,RV_OK,TK_Complete,PK000I1163,020 Wedge Flow Meters - Recv on Site,,,,0,0,0,0,0,0,0,0,,2006-10-13 00:00,2006-10-13 00:00,2009-02-15 08:01,2009-02-15 08:01,,2007-01-27 00:00,2007-01-27 00:00,,,2007-01-20 08:01,2007-01-20 08:01,,,,,PT_Normal,,,,,9lnYSlivTI6ShlaY/urQ4g,KugaZHSzg0q5RlN+Kbe3Ix,,,N,0,0,,,2007-02-01 02:43,2007-02-04 01:05,hbe4678,hbe4678,,,0
4048,12460229,14517,6816204,13329,0,100,N,N,N,CP_Units,TT_FinMile,DT_FixedDUR2,RV_OK,TK_Complete,PK02MMB81Z,02M Recv. at Site - 102-B Startup Heater,,,,0,0,0,0,0,0,0,0,,2006-09-16 00:00,2006-09-16 00:00,2007-12-31 08:01,2007-12-31 08:01,,2007-01-27 00:00,2007-01-27 00:00,,,2006-10-28 08:01,2006-10-28 08:01,,,,,PT_Normal,,,,,PzXD9K4oRX2FFko3gw7UbA,,,,N,0,0,,,2007-02-01 02:43,2007-02-04 01:05,hbe4678,hbe4678,,,0
4049,12460230,14517,6816204,13329,0,100,N,N,N,CP_Units,TT_FinMile,DT_FixedDrtn,RV_OK,TK_Complete,PK02MMC21Z,02M Recv. at Site - 124-C Ammonia Convr. Effluent Cooler,,,,0,0,0,0,0,0,0,0,,2006-12-09 00:00,2006-12-09 00:00,2007-12-31 08:01,2007-12-31 08:01,,2007-01-27 00:00,2007-01-27 00:00,,,2007-01-20 08:01,2007-01-20 08:01,,,,,PT_Normal,,,,,dhtrouYkTGCBcT1lbm4x4w,,,,N,0,0,,,2007-02-01 02:43,2007-02-04 01:05,hbe4678,hbe4678,,,0
4050,12460231,14517,6816204,13329,0,0,N,N,N,CP_Units,TT_FinMile,DT_FixedDUR2,RV_OK,TK_NotStart,PK02MMC32Z,02M Recv. at Site - 123-C1/ C2A/ C2B Exchangers,,1504.03333333333,328.016666666667,0,0,0,0,0,0,0,0,,,,2007-12-31 08:01,2007-12-31 08:01,,2007-04-26 16:59,2007-04-26 16:59,2007-04-26 16:59,2007-04-26 16:59,2007-04-26 16:59,2007-04-26 16:59,,2007-12-31 08:01,2007-12-31 08:01,,PT_Normal,,,,,3uswGJVcSuaZFs261UnAZw,,,,N,0,0,,,2007-02-01 02:43,2007-02-04 01:00,hbe4678,hbe4678,2007-04-26 16:59,2007-04-26 16:59,0
4051,12460232,14517,6816204,13329,0,0,N,N,N,CP_Units,TT_FinMile,DT_FixedDUR2,RV_OK,TK_NotStart,PK02MMD33Z,02M Recv. at Site - 105-D (Heavy Lift),,504,0,0,0,0,0,0,0,0,0,,,,2007-08-21 08:01,2007-08-21 08:01,,2007-06-09 08:01,2007-06-09 08:01,2007-06-09 08:01,2007-06-09 08:01,2007-06-09 08:01,2007-06-09 08:01,,2007-08-21 08:01,2007-08-21 08:01,,PT_Normal,,,,,c1p0cwjbQa+ihjRm4+odkQ,,,,N,0,0,,,2007-02-01 02:43,2007-02-04 01:00,hbe4678,hbe4678,2007-06-09 08:01,2007-06-09 08:01,0
4052,12460233,14517,6816204,13329,0,0,N,N,N,CP_Units,TT_FinMile,DT_FixedDUR2,RV_OK,TK_NotStart,PK02NMC32Z,02N Recv. at Site - 120-C (Heavy Lift),,880,431.983333333333,0,0,0,0,0,0,0,0,,,,2007-09-10 08:01,2007-09-10 08:01,,2007-05-05 08:01,2007-05-05 08:01,2007-05-05 08:01,2007-05-05 08:01,2007-05-05 08:01,2007-05-05 08:01,,2007-09-10 08:01,2007-09-10 08:01,,PT_Normal,,,,,ATN6vD4kRs2FUwgzc0QetQ,,,,N,0,0,,,2007-02-01 02:43,2007-02-04 01:00,hbe4678,hbe4678,2007-05-05 08:01,2007-05-05 08:01,0
4053,12460234,14517,6816204,13329,0,100,N,N,N,CP_Units,TT_FinMile,DT_FixedDUR2,RV_OK,TK_Complete,PK02PMU35Z,02P Recv. at Site - 101-U Deaerator,,,,0,0,0,0,0,0,0,0,,2006-09-16 00:00,2006-09-16 00:00,2007-12-04 08:01,2007-12-04 08:01,,2007-01-27 00:00,2007-01-27 00:00,,,2006-09-21 08:01,2006-09-21 08:01,,,,,PT_Normal,,,,,8mQmnhPtS+eF/NarXLYHfg,,,,N,0,0,,,2007-02-01 02:43,2007-02-04 01:05,hbe4678,hbe4678,,,0
4054,12460235,14517,6816204,13329,0,0,N,N,N,CP_Units,TT_FinMile,DT_FixedDUR2,RV_OK,TK_NotStart,PK02QMD41Z,02Q Recv. at Site - 101-F Steam Drum,,1536,727.983333333333,0,0,0,0,0,0,0,0,,,,2007-12-02 08:01,2007-12-02 08:01,,2007-03-31 08:01,2007-03-31 08:01,2007-03-31 08:01,2007-03-31 08:01,2007-03-31 08:01,2007-03-31 08:01,,2007-12-02 08:01,2007-12-02 08:01,,PT_Normal,,,,,Jr0DGK3YQ3q9+kcwMz/6Zw,,,,N,0,0,,,2007-02-01 02:43,2007-02-04 01:00,hbe4678,hbe4678,2007-03-31 08:01,2007-03-31 08:01,0
4055,12460236,14517,6816204,13329,0,100,N,N,N,CP_Units,TT_FinMile,DT_FixedDUR2,RV_OK,TK_Complete,PK02HMB63Z,02H Recv. at Site - 101-B Air Preheater,,,,0,0,0,0,0,0,0,0,,2006-09-16 00:00,2006-09-16 00:00,2008-01-19 08:01,2008-01-19 08:01,,2007-01-27 00:00,2007-01-27 00:00,,,2006-09-21 08:01,2006-09-21 08:01,,,,,PT_Normal,,,,,tfhYjclTQUSP8IbdB4xjFQ,,,,N,0,0,,,2007-02-01 02:43,2007-02-04 01:05,hbe4678,hbe4678,,,0
4056,12460237,14517,6816204,13329,0,100,N,N,N,CP_Units,TT_FinMile,DT_FixedDUR2,RV_OK,TK_Complete,PK02HMB64Z,02H Recv. at Site - 101-B Springs & Hangers,,,,0,0,0,0,0,0,0,0,,2006-09-16 00:00,2006-09-16 00:00,2008-03-01 08:01,2008-03-01 08:01,,2007-01-27 00:00,2007-01-27 00:00,,,2006-09-21 08:01,2006-09-21 08:01,,,,,PT_Normal,,,,,ee9WECkdR0+p8whueLMrmg,,,,N,0,0,,,2007-02-01 02:43,2007-02-04 01:05,hbe4678,hbe4678,,,0
4057,12460238,14517,6816204,13329,0,100,N,N,N,CP_Units,TT_FinMile,DT_FixedDUR2,RV_OK,TK_Complete,PK02HMB65Z,02H Recv. at Site - 101-B Penthouse Circ Fans,,,,0,0,0,0,0,0,0,0,,2006-09-16 00:00,2006-09-16 00:00,2007-12-17 08:01,2007-12-17 08:01,,2007-01-27 00:00,2007-01-27 00:00,,,2006-09-21 08:01,2006-09-21 08:01,,,,,PT_Normal,,,,,YJPLKHh8R+iR3vHVwAO0Mg,,,,N,0,0,,,2007-02-01 02:43,2007-02-04 01:05,hbe4678,hbe4678,,,0
4058,12460239,14517,6816204,13329,0,100,N,N,N,CP_Units,TT_FinMile,DT_FixedDUR2,RV_OK,TK_Complete,PK02HMB66Z,02H Recv. at Site - 101-B Dampers & Air Doors,,,,0,0,0,0,0,0,0,0,,2006-12-09 00:00,2006-12-09 00:00,2008-03-29 08:01,2008-03-29 08:01,,2007-01-27 00:00,2007-01-27 00:00,,,2007-02-10 08:01,2007-02-10 08:01,,,,,PT_Normal,,,,,/A62/FG2R/6lzkPYsVMvNA,,,,N,0,0,,,2007-02-01 02:43,2007-02-04 01:05,hbe4678,hbe4678,,,0
4059,12460240,14517,6816204,13329,0,100,N,N,N,CP_Units,TT_FinMile,DT_FixedDUR2,RV_OK,TK_Complete,PK02HMB68Z,02H Recv. at Site - 101-B Cat Vacuum Equip,,,,0,0,0,0,0,0,0,0,,2006-09-16 00:00,2006-09-16 00:00,2008-04-12 08:01,2008-04-12 08:01,,2007-01-27 00:00,2007-01-27 00:00,,,2006-09-21 08:01,2006-09-21 08:01,,,,,PT_Normal,,,,,deskw1uAQEitkRhYWzwp7Q,,,,N,0,0,,,2007-02-01 02:43,2007-02-04 01:05,hbe4678,hbe4678,,,0
4060,12460241,14517,6816204,13329,0,100,N,N,N,CP_Units,TT_FinMile,DT_FixedDrtn,RV_OK,TK_Complete,PK02HMB69Z,02H Recv. at Site - 101-B Expansion Joints,,,,0,0,0,0,0,0,0,0,,2006-12-11 00:00,2006-12-11 00:00,2008-02-16 08:01,2008-02-16 08:01,,2007-01-27 00:00,2007-01-27 00:00,,,2007-02-10 08:01,2007-02-10 08:01,,,,,PT_Normal,,,,,6Hik81k3TBeBgji1DM9SZw,,,,N,0,0,,,2007-02-01 02:43,2007-02-04 01:05,hbe4678,hbe4678,,,0
4061,12460242,14517,6816204,13329,0,100,N,N,N,CP_Units,TT_FinMile,DT_FixedDrtn,RV_OK,TK_Complete,PK02HMBP1K,02H Recv. at Site - 101-B Radiant Steel Panels,,,,0,0,0,0,0,0,0,0,,2006-09-16 00:00,2006-09-16 00:00,2007-06-07 08:01,2007-06-07 08:01,,2007-01-27 00:00,2007-01-27 00:00,,,2007-01-06 08:01,2007-01-06 08:01,,,,,PT_Normal,,,,,OfjOrzKASGWnc1tE4cLAYQ,,,,N,0,0,,,2007-02-01 02:43,2007-02-04 01:05,hbe4678,hbe4678,,,0
4062,12460243,14517,6816204,13329,0,100,N,N,N,CP_Units,TT_FinMile,DT_FixedDrtn,RV_OK,TK_Complete,PK02HMBP1Q,02H Recv. at Site - 101-B Radiant Harps,,,,0,0,0,0,0,0,0,0,,2006-12-09 00:00,2006-12-09 00:00,2007-11-05 08:01,2007-11-05 08:01,,2007-01-27 00:00,2007-01-27 00:00,,,2007-01-27 08:01,2007-01-27 08:01,,,,,PT_Normal,,,,,ETiWPIo5REG1KXY6eATAKw,,,,N,0,0,,,2007-02-01 02:43,2007-02-04 01:05,hbe4678,hbe4678,,,0
4063,12460244,14517,6816204,13329,0,100,N,N,N,CP_Units,TT_FinMile,DT_FixedDrtn,RV_OK,TK_Complete,PK02HMBP1R,02H Recv. at Site - 101-B Convection Modules,,,,0,0,0,0,0,0,0,0,,2006-12-09 00:00,2006-12-09 00:00,2007-10-27 08:01,2007-10-27 08:01,,2007-01-27 00:00,2007-01-27 00:00,,,2007-01-27 08:01,2007-01-27 08:01,,,,,PT_Normal,,,,,WCAH/YbyRiOE3qRMVmYjxw,,,,N,0,0,,,2007-02-01 02:43,2007-02-04 01:05,hbe4678,hbe4678,,,0
4064,12460245,14517,6816204,13329,0,100,N,N,N,CP_Units,TT_FinMile,DT_FixedDrtn,RV_OK,TK_Complete,PK02HMBP1S,02H Recv. at Site - 101-B Radiant Ducting,,,,0,0,0,0,0,0,0,0,,2006-12-09 00:00,2006-12-09 00:00,2007-09-19 08:01,2007-09-19 08:01,,2007-01-27 00:00,2007-01-27 00:00,,,2007-01-27 08:01,2007-01-27 08:01,,,,,PT_Normal,,,,,qGE/xEUjREScYFMsUo6ofQ,,,,N,0,0,,,2007-02-01 02:43,2007-02-04 01:05,hbe4678,hbe4678,,,0
4065,12460246,14517,6816204,13329,0,100,N,N,N,CP_Units,TT_FinMile,DT_FixedDrtn,RV_OK,TK_Complete,PK02HMBP1T,02H Recv. at Site - 101-B Crossover,,,,0,0,0,0,0,0,0,0,,2006-12-09 00:00,2006-12-09 00:00,2008-01-20 08:01,2008-01-20 08:01,,2007-01-27 00:00,2007-01-27 00:00,,,2007-01-27 08:01,2007-01-27 08:01,,,,,PT_Normal,,,,,cqiRY+G5Rba4dRJUjZsxqQ,,,,N,0,0,,,2007-02-01 02:43,2007-02-04 01:05,hbe4678,hbe4678,,,0
4066,12460247,14517,6816204,13329,0,0,N,N,N,CP_Units,TT_FinMile,DT_FixedDUR2,RV_OK,TK_NotStart,PK02HMC31Z,02H Recv. at Site - 101-C & 102-C (Heavy Lift),,80.0166666666667,0,0,0,0,0,0,0,0,0,,,,2007-09-10 08:01,2007-09-10 08:01,,2007-08-28 17:00,2007-08-28 17:00,2007-08-28 17:00,2007-08-28 17:00,2007-08-28 17:00,2007-08-28 17:00,,2007-09-10 08:01,2007-09-10 08:01,,PT_Normal,,,,,icDj0rDUQr288n5Uxs8W6w,,,,N,0,0,,,2007-02-01 02:43,2007-02-04 01:00,hbe4678,hbe4678,2007-08-28 17:00,2007-08-28 17:00,0
4067,12460248,14517,6816204,13329,0,0,N,N,N,CP_Units,TT_FinMile,DT_FixedDUR2,RV_OK,TK_NotStart,PK02HMD31Z,02H Recv. at Site - 103-D (Heavy Lift),,544,0,0,0,0,0,0,0,0,0,,,,2007-07-23 08:01,2007-07-23 08:01,,2007-05-05 08:01,2007-05-05 08:01,2007-05-05 08:01,2007-05-05 08:01,2007-05-05 08:01,2007-05-05 08:01,,2007-07-23 08:01,2007-07-23 08:01,,PT_Normal,,,,,W6+dRN7SQUWN9QDBYP+RKA,,,,N,0,0,,,2007-02-01 02:43,2007-02-04 01:00,hbe4678,hbe4678,2007-05-05 08:01,2007-05-05 08:01,0
4068,12460249,14517,6816204,13329,0,100,N,N,N,CP_Units,TT_FinMile,DT_FixedDUR2,RV_OK,TK_Complete,PK02HMD45Z,02H Recv. at Site - 156-F Steam Blowdown Drum,,,,0,0,0,0,0,0,0,0,,2006-09-16 00:00,2006-09-16 00:00,2007-08-23 08:01,2007-08-23 08:01,,2007-01-27 00:00,2007-01-27 00:00,,,2006-09-21 08:01,2006-09-21 08:01,,,,,PT_Normal,,,,,muUA6bujTwmK6TwsXIwwGA,,,,N,0,0,,,2007-02-01 02:43,2007-02-04 01:05,hbe4678,hbe4678,,,0
4069,12460250,14517,6816204,13329,0,100,N,N,N,CP_Units,TT_FinMile,DT_FixedDrtn,RV_OK,TK_Complete,PK02HMD51Z,02H Recv. at Site - 107-D Primary Reformer Tranfer Line,,,,0,0,0,0,0,0,0,0,,2006-12-09 00:00,2006-12-09 00:00,2007-12-03 08:01,2007-12-03 08:01,,2007-01-27 00:00,2007-01-27 00:00,,,2007-01-27 08:01,2007-01-27 08:01,,,,,PT_Normal,,,,,WSkX68FLSjOXktPfxmbEnw,,,,N,0,0,,,2007-02-01 02:43,2007-02-04 01:05,hbe4678,hbe4678,,,0
4070,12460251,14517,6816204,13329,0,100,N,N,N,CP_Units,TT_FinMile,DT_FixedDUR2,RV_OK,TK_Complete,PK02GMJ21Z,02G Recv. at Site - 102-J/JL Fd Gas Compr. & Aux.,,,,0,0,0,0,0,0,0,0,,2006-12-14 17:00,2006-12-14 17:00,2007-09-03 08:01,2007-09-03 08:01,,2007-01-27 00:00,2007-01-27 00:00,,,2007-01-22 17:00,2007-01-22 17:00,,,,,PT_Normal,,,,,WRcATlfhT7yqLwapAZ5eFA,,,,N,0,0,,,2007-02-01 02:43,2007-02-04 01:05,hbe4678,hbe4678,,,0
4071,12460252,14517,6816204,13329,0,0,N,N,N,CP_Units,TT_FinMile,DT_FixedDUR2,RV_OK,TK_NotStart,PK02GMJ22Z,"Recv. at Site - 101-J/JL/JT/JC-A,B,C Air Compr",,840,0,0,0,0,0,0,0,0,0,,,,2007-08-07 08:01,2007-08-07 08:01,,2007-04-07 08:01,2007-04-07 08:01,2007-04-07 08:01,2007-04-07 08:01,2007-04-07 08:01,2007-04-07 08:01,,2007-08-07 08:01,2007-08-07 08:01,,PT_Normal,,,,,0+hm/4mYQm2p2HyO6LjWYA,,,,N,0,0,,,2007-02-01 02:43,2007-02-04 01:00,hbe4678,hbe4678,2007-04-07 08:01,2007-04-07 08:01,0
4072,12460253,14517,6816204,13329,0,0,N,N,N,CP_Units,TT_FinMile,DT_FixedDUR2,RV_OK,TK_NotStart,PK02GMJ35Z,02G Recv. at Site - 113-J/JA Condensate Pumps,,1592.01666666667,0,0,0,0,0,0,0,0,0,,,,2008-01-10 08:01,2008-01-10 08:01,,2007-04-24 17:00,2007-04-24 17:00,2007-04-24 17:00,2007-04-24 17:00,2007-04-24 17:00,2007-04-24 17:00,,2008-01-10 08:01,2008-01-10 08:01,,PT_Normal,,,,,vobJxyAzTn2TfTQtpJ496A,,,,N,0,0,,,2007-02-01 02:43,2007-02-04 01:00,hbe4678,hbe4678,2007-04-24 17:00,2007-04-24 17:00,0
4073,12460254,14517,6816204,13329,0,100,N,N,N,CP_Units,TT_FinMile,DT_FixedDUR2,RV_OK,TK_Complete,PK02GMJ75Z,02G Recv. at Site - 101-JTC Surface Condenser,,,,0,0,0,0,0,0,0,0,,2006-09-16 00:00,2006-09-16 00:00,2007-12-25 08:01,2007-12-25 08:01,,2007-01-27 00:00,2007-01-27 00:00,,,2006-10-28 08:01,2006-10-28 08:01,,,,,PT_Normal,,,,,aKUZ1Tp0Tc+pBrKvWEl5Qg,,,,N,0,0,,,2007-02-01 02:43,2007-02-04 01:05,hbe4678,hbe4678,,,0
4074,12460255,14517,6816204,13329,0,0,N,N,N,CP_Units,TT_FinMile,DT_FixedDUR2,RV_OK,TK_NotStart,PK02DMJ35Z,"02D Recv. at Site - 120-J/JA, 124-J/JA Pumps",,1456.01666666667,0,0,0,0,0,0,0,0,0,,,,2007-12-16 08:01,2007-12-16 08:01,,2007-04-24 17:00,2007-04-24 17:00,2007-04-24 17:00,2007-04-24 17:00,2007-04-24 17:00,2007-04-24 17:00,,2007-12-16 08:01,2007-12-16 08:01,,PT_Normal,,,,,xunlNJG+TS2hfQ8x5FFVRQ,,,,N,0,0,,,2007-02-01 02:43,2007-02-04 01:00,hbe4678,hbe4678,2007-04-24 17:00,2007-04-24 17:00,0
4075,12460256,14517,6816204,13329,0,100,N,N,N,CP_Units,TT_FinMile,DT_FixedDrtn,RV_OK,TK_Complete,PK02EMC21Z,02E Recv. at Site - 115-C & 130-C Exchangers,,,,0,0,0,0,0,0,0,0,,2006-12-09 00:00,2006-12-09 00:00,2008-01-05 08:01,2008-01-05 08:01,,2007-01-27 00:00,2007-01-27 00:00,,,2007-01-20 08:01,2007-01-20 08:01,,,,,PT_Normal,,,,,eIxLbPLITxetB1TD4Zqr8Q,,,,N,0,0,,,2007-02-01 02:43,2007-02-04 01:05,hbe4678,hbe4678,,,0
4076,12460257,14517,6816204,13329,0,100,N,N,N,CP_Units,TT_FinMile,DT_FixedDrtn,RV_OK,TK_Complete,PK02EMC23Z,"02E Recv. at Site - 172-C, 183-C Exchangers",,,,0,0,0,0,0,0,0,0,,2006-12-09 00:00,2006-12-09 00:00,2008-01-05 08:01,2008-01-05 08:01,,2007-01-27 00:00,2007-01-27 00:00,,,2007-01-20 08:01,2007-01-20 08:01,,,,,PT_Normal,,,,,9SNgXYqOTjSvPmgFEx0bsA,,,,N,0,0,,,2007-02-01 02:43,2007-02-04 01:05,hbe4678,hbe4678,,,0
4077,12460258,14517,6816204,13329,0,0,N,N,N,CP_Units,TT_FinMile,DT_FixedDUR2,RV_OK,TK_NotStart,PK02EMD34Z,02E Recv. at Site - 106-D & 109-DA/B,,1728,711.983333333333,0,0,0,0,0,0,0,0,,,,2008-01-05 08:01,2008-01-05 08:01,,2007-03-31 08:01,2007-03-31 08:01,2007-03-31 08:01,2007-03-31 08:01,2007-03-31 08:01,2007-03-31 08:01,,2008-01-05 08:01,2008-01-05 08:01,,PT_Normal,,,,,CfEV02DeQC6+dRyrc5xXIA,,,,N,0,0,,,2007-02-01 02:43,2007-02-04 01:00,hbe4678,hbe4678,2007-03-31 08:01,2007-03-31 08:01,0
4078,12460259,14517,6816204,13329,0,100,N,N,N,CP_Units,TT_FinMile,DT_FixedDUR2,RV_OK,TK_Complete,PK02EMD42Z,02E Recv. at Site - 104-F Syn Gas Compr Suction Drum,,,,0,0,0,0,0,0,0,0,,2006-09-16 00:00,2006-09-16 00:00,2008-01-05 08:01,2008-01-05 08:01,,2007-01-27 00:00,2007-01-27 00:00,,,2006-09-21 08:01,2006-09-21 08:01,,,,,PT_Normal,,,,,qAp/EblzRqygWZkewE4tAw,,,,N,0,0,,,2007-02-01 02:43,2007-02-04 01:05,hbe4678,hbe4678,,,0
4079,12460260,14517,6816204,13329,0,100,N,N,N,CP_Units,TT_FinMile,DT_FixedDUR2,RV_OK,TK_Complete,PK02EMD45Z,02E Recv. at Site - 157-F Mole Sieve Regen HP Cond Drum,,,,0,0,0,0,0,0,0,0,,2006-09-16 00:00,2006-09-16 00:00,2008-01-05 08:01,2008-01-05 08:01,,2007-01-27 00:00,2007-01-27 00:00,,,2006-09-21 08:01,2006-09-21 08:01,,,,,PT_Normal,,,,,PcmoUZyQSQa8+3sBEKD5vg,,,,N,0,0,,,2007-02-01 02:43,2007-02-04 01:05,hbe4678,hbe4678,,,0
4080,12460261,14517,6816204,13329,0,0,N,N,N,CP_Units,TT_FinMile,DT_FixedDUR2,RV_OK,TK_NotStart,PK02FMJ31Z,02F Recv. at Site - 104-J HP BFW Pump,,1408.01666666667,0,0,0,0,0,0,0,0,0,,,,2008-01-05 08:01,2008-01-05 08:01,,2007-05-15 17:00,2007-05-15 17:00,2007-05-15 17:00,2007-05-15 17:00,2007-05-15 17:00,2007-05-15 17:00,,2008-01-05 08:01,2008-01-05 08:01,,PT_Normal,,,,,feE9MrHuQQCOMI1nzON8Dg,,,,N,0,0,,,2007-02-01 02:43,2007-02-04 01:00,hbe4678,hbe4678,2007-05-15 17:00,2007-05-15 17:00,0
4081,12460262,14517,6816204,13329,0,0,N,N,N,CP_Units,TT_Mile,DT_FixedDrtn,RV_OK,TK_NotStart,PK020I131L,Recv at Site - Transmitters -Press.,,736,576,0,0,0,0,0,0,0,0,,,,2007-07-09 08:00,2007-07-09 08:00,,2007-03-24 08:00,2007-03-24 08:00,2007-03-24 08:00,2007-03-24 08:00,2007-03-24 08:00,2007-03-24 08:00,,2007-07-09 08:00,2007-07-09 08:00,,PT_Normal,,,,,ekv0LiRSQ52XTyTKpkSipw,,,,N,0,0,,,2007-02-01 02:43,2007-02-01 02:43,hbe4678,hbe4678,2007-03-24 08:00,2007-03-24 08:00,0
4082,12460263,14517,6816204,13329,0,100,N,N,N,CP_Units,TT_FinMile,DT_FixedDUR2,RV_OK,TK_Complete,PK020IC220,020 Control Valves - Recv on Site,,,,0,0,0,0,0,0,0,0,,2006-12-29 00:00,2006-12-29 00:00,2009-02-15 08:01,2009-02-15 08:01,,2007-01-27 00:00,2007-01-27 00:00,,,2007-07-21 08:01,2007-07-21 08:01,,,,,PT_Normal,,,,,a0/Raq3HRXyuYtkL78OVOQ,,,,N,0,0,,,2007-02-01 02:43,2007-02-04 01:05,hbe4678,hbe4678,,,0
4083,12460264,14517,6816204,13329,0,100,N,N,N,CP_Units,TT_FinMile,DT_FixedDrtn,RV_OK,TK_Complete,PK02AMC21Z,02A Recv. at Site - 160-C Ammonia Distl Column Reboiler,,,,0,0,0,0,0,0,0,0,,2006-12-09 00:00,2006-12-09 00:00,2008-01-17 08:01,2008-01-17 08:01,,2007-01-27 00:00,2007-01-27 00:00,,,2007-01-20 08:01,2007-01-20 08:01,,,,,PT_Normal,,,,,+uu6lez7RheaKQxcVXhifw,,,,N,0,0,,,2007-02-01 02:43,2007-02-04 01:05,hbe4678,hbe4678,,,0
4084,12460265,14517,6816204,13329,0,100,N,N,N,CP_Units,TT_FinMile,DT_FixedDUR2,RV_OK,TK_Complete,PK02AMC61Z,02A Recv. at Site - 161-C Aqua Ammonia Interchanger,,,,0,0,0,0,0,0,0,0,,2006-09-16 00:00,2006-09-16 00:00,2008-01-17 08:01,2008-01-17 08:01,,2007-01-27 00:00,2007-01-27 00:00,,,2006-09-21 08:01,2006-09-21 08:01,,,,,PT_Normal,,,,,SQYGbLp9RlScyD2hGArDFg,,,,N,0,0,,,2007-02-01 02:43,2007-02-04 01:05,hbe4678,hbe4678,,,0
4085,12460266,14517,6816204,13329,0,100,N,N,N,CP_Units,TT_FinMile,DT_FixedDUR2,RV_OK,TK_Complete,PK02AMD22Z,"02A Recv. at Site - 103-E,  105-E Towers",,,,0,0,0,0,0,0,0,0,,2006-09-16 00:00,2006-09-16 00:00,2008-01-17 08:01,2008-01-17 08:01,,2007-01-27 00:00,2007-01-27 00:00,,,2006-09-21 08:01,2006-09-21 08:01,,,,,PT_Normal,,,,,JVkLbjWpRXamys9B7FbnhQ,,,,N,0,0,,,2007-02-01 02:43,2007-02-04 01:05,hbe4678,hbe4678,,,0
4086,12460267,14517,6816204,13329,0,100,N,N,N,CP_Units,TT_FinMile,DT_FixedDUR2,RV_OK,TK_Complete,PK02AMJ37Z,"02A Recv. at Site - 130-J/JA, 131-J/JA Metering Pumps",,,,0,0,0,0,0,0,0,0,,2006-10-30 00:00,2006-10-30 00:00,2008-01-03 08:01,2008-01-03 08:01,,2007-01-27 00:00,2007-01-27 00:00,,,2006-10-31 17:00,2006-10-31 17:00,,,,,PT_Normal,,,,,H18oueGPR5+/2SPFMpZpKQ,,,,N,0,0,,,2007-02-01 02:43,2007-02-04 01:05,hbe4678,hbe4678,,,0
4087,12460268,14517,6816204,13329,0,0,N,N,N,CP_Units,TT_FinMile,DT_FixedDUR2,RV_OK,TK_NotStart,PK02BML31Z,02B Recv. at Site - 160-L Purge Gas Recovery Unit,,2312,0,0,0,0,0,0,0,0,0,,,,2008-02-24 08:01,2008-02-24 08:01,,2007-02-24 08:01,2007-02-24 08:01,2007-02-24 08:01,2007-02-24 08:01,2007-02-24 08:01,2007-02-24 08:01,,2008-02-24 08:01,2008-02-24 08:01,,PT_Normal,,,,,Sxj0fgM5QaeAT2h1/a4Tng,,,,N,0,0,,,2007-02-01 02:43,2007-02-04 01:00,hbe4678,hbe4678,2007-02-24 08:01,2007-02-24 08:01,0
4088,12460269,14517,6816204,13329,0,100,N,N,N,CP_Units,TT_FinMile,DT_FixedDUR2,RV_OK,TK_Complete,PK02DMC21Z,02D Recv. at Site - 127-C Refrigerant Condenser,,,,0,0,0,0,0,0,0,0,,2006-09-16 00:00,2006-09-16 00:00,2007-12-29 08:01,2007-12-29 08:01,,2007-01-27 00:00,2007-01-27 00:00,,,2006-09-21 08:01,2006-09-21 08:01,,,,,PT_Normal,,,,,25afKVYwRTOpS/eWC35YMw,,,,N,0,0,,,2007-02-01 02:43,2007-02-04 01:05,hbe4678,hbe4678,,,0
4089,12460270,14517,6816204,13329,0,0,N,N,N,CP_Units,TT_FinMile,DT_FixedDUR2,RV_OK,TK_NotStart,PK02DMD43Z,02D Recv. at Site - 106-F Ammonia Separator,,1104,39.9833333333333,0,0,0,0,0,0,0,0,,,,2007-12-29 08:01,2007-12-29 08:01,,2007-06-23 08:01,2007-06-23 08:01,2007-06-23 08:01,2007-06-23 08:01,2007-06-23 08:01,2007-06-23 08:01,,2007-12-29 08:01,2007-12-29 08:01,,PT_Normal,,,,,hiWSsIkZTvyIlS3wewDtcQ,,,,N,0,0,,,2007-02-01 02:43,2007-02-04 01:00,hbe4678,hbe4678,2007-06-23 08:01,2007-06-23 08:01,0
4090,12460271,14517,6816204,13329,0,100,N,N,N,CP_Units,TT_FinMile,DT_FixedDUR2,RV_OK,TK_Complete,PK02DMD44Z,02D Recv. at Site - 109-F Refrigerant Receiver,,,,0,0,0,0,0,0,0,0,,2006-09-16 00:00,2006-09-16 00:00,2007-12-29 08:01,2007-12-29 08:01,,2007-01-27 00:00,2007-01-27 00:00,,,2006-09-21 08:01,2006-09-21 08:01,,,,,PT_Normal,,,,,jdW1h5tSS/6FmMEm17LFGg,,,,N,0,0,,,2007-02-01 02:43,2007-02-04 01:05,hbe4678,hbe4678,,,0
4091,12460272,14517,6816204,13329,0,0,N,N,N,CP_Units,TT_FinMile,DT_FixedDUR2,RV_OK,TK_NotStart,PK02LMJ35Z,02L Recv. at Site - 116-J/JA & 121-J/JA Pumps,,1360.01666666667,0,0,0,0,0,0,0,0,0,,,,2007-12-02 08:01,2007-12-02 08:01,,2007-04-24 17:00,2007-04-24 17:00,2007-04-24 17:00,2007-04-24 17:00,2007-04-24 17:00,2007-04-24 17:00,,2007-12-02 08:01,2007-12-02 08:01,,PT_Normal,,,,,VmFHbNGZSnGC6ygFCfUT9g,,,,N,0,0,,,2007-02-01 02:43,2007-02-04 01:00,hbe4678,hbe4678,2007-04-24 17:00,2007-04-24 17:00,0
4092,12460273,14517,6816204,13329,0,100,N,N,N,CP_Units,TT_FinMile,DT_FixedDUR2,RV_OK,TK_Complete,PK02LML42Z,02L Recv. at Site - 104-L Benfeild Solution Filter,,,,0,0,0,0,0,0,0,0,,2006-09-16 00:00,2006-09-16 00:00,2007-12-09 08:01,2007-12-09 08:01,,2007-01-27 00:00,2007-01-27 00:00,,,2006-09-21 08:01,2006-09-21 08:01,,,,,PT_Normal,,,,,6/CZrfQqSueke/5u7CoIJQ,,,,N,0,0,,,2007-02-01 02:43,2007-02-04 01:05,hbe4678,hbe4678,,,0
4093,12460274,14517,6816204,13329,0,0,N,N,N,CP_Units,TT_FinMile,DT_FixedDUR2,RV_OK,TK_NotStart,PK02LMU31Z,MU310 - Recv. at Site - Injection System & Chlorination Unit,,1584,759.983333333333,0,0,0,0,0,0,0,0,,,,2007-12-09 08:01,2007-12-09 08:01,,2007-03-31 08:01,2007-03-31 08:01,2007-03-31 08:01,2007-03-31 08:01,2007-03-31 08:01,2007-03-31 08:01,,2007-12-09 08:01,2007-12-09 08:01,,PT_Normal,,,,,WXpBxO4eTnCv9dou3qakEw,,,,N,0,0,,,2007-02-01 02:43,2007-02-04 01:00,hbe4678,hbe4678,2007-03-31 08:01,2007-03-31 08:01,0
4094,12460275,14517,6816204,13329,0,100,N,N,N,CP_Units,TT_FinMile,DT_FixedDrtn,RV_OK,TK_Complete,PK02LMC21Z,02L Recv. at Site - 110-C Lean Solution Cooler,,,,0,0,0,0,0,0,0,0,,2006-12-09 00:00,2006-12-09 00:00,2007-07-02 08:01,2007-07-02 08:01,,2007-01-27 00:00,2007-01-27 00:00,,,2007-01-20 08:01,2007-01-20 08:01,,,,,PT_Normal,,,,,ZyesyQ7LTHykpZFWU/uHxw,,,,N,0,0,,,2007-02-01 02:43,2007-02-04 01:05,hbe4678,hbe4678,,,0
4095,12460276,14517,6816204,13329,0,100,N,N,N,CP_Units,TT_FinMile,DT_FixedDrtn,RV_OK,TK_Complete,PK02LMC23Z,02L Recv. at Site - 105-C Exchanger,,,,0,0,0,0,0,0,0,0,,2006-12-09 00:00,2006-12-09 00:00,2007-07-02 08:01,2007-07-02 08:01,,2007-01-27 00:00,2007-01-27 00:00,,,2007-01-20 08:01,2007-01-20 08:01,,,,,PT_Normal,,,,,Onyr5P5MSEe9c4+9B/qGvg,,,,N,0,0,,,2007-02-01 02:43,2007-02-04 01:05,hbe4678,hbe4678,,,0
4096,12460277,14517,6816204,13329,0,0,N,N,N,CP_Units,TT_FinMile,DT_FixedDUR2,RV_OK,TK_NotStart,PK02LMD21Z,02L Recv. at Site - 101-E (Heavy Lift),,904,0,0,0,0,0,0,0,0,0,,,,2007-08-09 08:01,2007-08-09 08:01,,2007-03-31 08:01,2007-03-31 08:01,2007-03-31 08:01,2007-03-31 08:01,2007-03-31 08:01,2007-03-31 08:01,,2007-08-09 08:01,2007-08-09 08:01,,PT_Normal,,,,,o0+vxSh3RTeBRKJlXrXKNg,,,,N,0,0,,,2007-02-01 02:43,2007-02-04 01:00,hbe4678,hbe4678,2007-03-31 08:01,2007-03-31 08:01,0
4097,12460278,14517,6816204,13329,0,100,N,N,N,CP_Units,TT_FinMile,DT_FixedDrtn,RV_OK,TK_Complete,PK02JMC21Z,02J Recv. at Site - 173-C Startup Cooler,,,,0,0,0,0,0,0,0,0,,2006-12-09 00:00,2006-12-09 00:00,2007-11-14 08:01,2007-11-14 08:01,,2007-01-27 00:00,2007-01-27 00:00,,,2007-01-20 08:01,2007-01-20 08:01,,,,,PT_Normal,,,,,Do/pAh8hQLGnaM85tYrIZw,,,,N,0,0,,,2007-02-01 02:43,2007-02-04 01:05,hbe4678,hbe4678,,,0
4098,12460279,14517,6816204,13329,0,0,N,N,N,CP_Units,TT_FinMile,DT_FixedDUR2,RV_OK,TK_NotStart,PK02JMC32Z,02J Recv. at Site - 103-C1/C2 HTS Effluent BFW Preheater/ Stm Gen's,,1224.03333333333,440.016666666667,0,0,0,0,0,0,0,0,,,,2007-11-14 08:01,2007-11-14 08:01,,2007-04-26 16:59,2007-04-26 16:59,2007-04-26 16:59,2007-04-26 16:59,2007-04-26 16:59,2007-04-26 16:59,,2007-11-14 08:01,2007-11-14 08:01,,PT_Normal,,,,,BbNO5QlvQgWqyuE46EYHRA,,,,N,0,0,,,2007-02-01 02:43,2007-02-04 01:00,hbe4678,hbe4678,2007-04-26 16:59,2007-04-26 16:59,0
4099,12460280,14517,6816204,13329,0,0,N,N,N,CP_Units,TT_FinMile,DT_FixedDUR2,RV_OK,TK_NotStart,PK02JMD32Z,02J Recv. at Site - 104-D1/D2 (Heavy Lift),,824,0,0,0,0,0,0,0,0,0,,,,2007-07-29 08:01,2007-07-29 08:01,,2007-03-31 08:01,2007-03-31 08:01,2007-03-31 08:01,2007-03-31 08:01,2007-03-31 08:01,2007-03-31 08:01,,2007-07-29 08:01,2007-07-29 08:01,,PT_Normal,,,,,GlB9sQKnR6u6o9IJxC/lPw,,,,N,0,0,,,2007-02-01 02:43,2007-02-04 01:00,hbe4678,hbe4678,2007-03-31 08:01,2007-03-31 08:01,0
4100,12460281,14517,6816204,13329,0,0,N,N,N,CP_Units,TT_FinMile,DT_FixedDUR2,RV_OK,TK_NotStart,PK02JMD34Z,02J Recv. at Site - 108-DA/DB Desulferizers,,1416,631.983333333333,0,0,0,0,0,0,0,0,,,,2007-11-14 08:01,2007-11-14 08:01,,2007-03-31 08:01,2007-03-31 08:01,2007-03-31 08:01,2007-03-31 08:01,2007-03-31 08:01,2007-03-31 08:01,,2007-11-14 08:01,2007-11-14 08:01,,PT_Normal,,,,,BN2HlZTXQsqCR9jrgQNLWw,,,,N,0,0,,,2007-02-01 02:43,2007-02-04 01:00,hbe4678,hbe4678,2007-03-31 08:01,2007-03-31 08:01,0
4101,12460282,14517,6816204,13329,0,100,N,N,N,CP_Units,TT_FinMile,DT_FixedDrtn,RV_OK,TK_Complete,PK02KMC21Z,02K Recv. at Site - 174-C Stripped Condensate Cooler,,,,0,0,0,0,0,0,0,0,,2006-12-09 00:00,2006-12-09 00:00,2007-10-20 08:01,2007-10-20 08:01,,2007-01-27 00:00,2007-01-27 00:00,,,2007-01-20 08:01,2007-01-20 08:01,,,,,PT_Normal,,,,,+t3w+5UgTf6+JCfyzJEL1g,,,,N,0,0,,,2007-02-01 02:43,2007-02-04 01:05,hbe4678,hbe4678,,,0
4102,12460283,14517,6816204,13329,0,100,N,N,N,CP_Units,TT_FinMile,DT_FixedDUR2,RV_OK,TK_Complete,PK02KMC61Z,02K Recv. at Site - 188-CA/ CB/ CC Exchangers,,,,0,0,0,0,0,0,0,0,,2006-09-16 00:00,2006-09-16 00:00,2007-10-20 08:01,2007-10-20 08:01,,2007-01-27 00:00,2007-01-27 00:00,,,2006-09-21 08:01,2006-09-21 08:01,,,,,PT_Normal,,,,,iC9SjndpTPOI4cLvwV8wog,,,,N,0,0,,,2007-02-01 02:43,2007-02-04 01:05,hbe4678,hbe4678,,,0
4103,12460284,14517,6816204,13329,0,0,N,N,N,CP_Units,TT_FinMile,DT_FixedDrtn,RV_OK,TK_NotStart,PK02KMD22Z,02K Recv. at Site - 150-E Process Cond. Stripper,,808,0,0,0,0,0,0,0,0,0,,,,2007-10-20 08:01,2007-10-20 08:01,,2007-06-02 08:01,2007-06-02 08:01,2007-06-02 08:01,2007-06-02 08:01,2007-06-02 08:01,2007-06-02 08:01,,2007-10-20 08:01,2007-10-20 08:01,,PT_Normal,,,,,o2l3ScJCTGW1Xsg14uUlyw,,,,N,0,0,,,2007-02-01 02:43,2007-02-04 01:00,hbe4678,hbe4678,2007-06-02 08:01,2007-06-02 08:01,0
4104,12460285,14517,6816204,13329,0,100,N,N,N,CP_Units,TT_FinMile,DT_FixedDUR2,RV_OK,TK_Complete,PK02KMD45Z,02K Recv. at Site - Equip. 118-F,,,,0,0,0,0,0,0,0,0,,2006-09-16 00:00,2006-09-16 00:00,2007-10-20 08:01,2007-10-20 08:01,,2007-01-27 00:00,2007-01-27 00:00,,,2006-09-21 08:01,2006-09-21 08:01,,,,,PT_Normal,,,,,p0lHkfrTTqGzYtxjt3V+jA,,,,N,0,0,,,2007-02-01 02:43,2007-02-04 01:05,hbe4678,hbe4678,,,0
4105,12460286,14517,6816204,13329,0,0,N,N,N,CP_Units,TT_FinMile,DT_FixedDUR2,RV_OK,TK_NotStart,PK02KMJ35Z,"02K Recv. at Site - 111-J, 115-J Benfield Transfer & Sump Pumps",,1304.01666666667,0,0,0,0,0,0,0,0,0,,,,2007-11-24 08:01,2007-11-24 08:01,,2007-04-24 17:00,2007-04-24 17:00,2007-04-24 17:00,2007-04-24 17:00,2007-04-24 17:00,2007-04-24 17:00,,2007-11-24 08:01,2007-11-24 08:01,,PT_Normal,,,,,t+JQcqxiTheIwnpuI/GumQ,,,,N,0,0,,,2007-02-01 02:43,2007-02-04 01:00,hbe4678,hbe4678,2007-04-24 17:00,2007-04-24 17:00,0
4106,12460287,14517,6816204,13329,0,100,N,N,N,CP_Units,TT_FinMile,DT_FixedDUR2,RV_OK,TK_Complete,PK02KML42Z,02K Recv. at Site - 115-L Benfeild Sump Filter,,,,0,0,0,0,0,0,0,0,,2006-09-16 00:00,2006-09-16 00:00,2007-11-03 08:01,2007-11-03 08:01,,2007-01-27 00:00,2007-01-27 00:00,,,2006-09-21 08:01,2006-09-21 08:01,,,,,PT_Normal,,,,,mWdLzOt8QdSUA6THG0iyMA,,,,N,0,0,,,2007-02-01 02:43,2007-02-04 01:05,hbe4678,hbe4678,,,0
4107,12460288,14517,6816204,13329,0,100,N,N,N,CP_Units,TT_FinMile,DT_FixedDUR2,RV_OK,TK_Complete,PK02KML43Z,02K Recv. at Site - 110-L Benfeild Mixer,,,,0,0,0,0,0,0,0,0,,2006-09-16 00:00,2006-09-16 00:00,2007-11-03 08:01,2007-11-03 08:01,,2007-01-27 00:00,2007-01-27 00:00,,,2006-09-21 08:01,2006-09-21 08:01,,,,,PT_Normal,,,,,LFC0KyJxSXSNdboCZSI67w,,,,N,0,0,,,2007-02-01 02:43,2007-02-04 01:05,hbe4678,hbe4678,,,0
4108,12460289,14517,6816204,13329,0,0,N,N,N,CP_Units,TT_FinMile,DT_FixedDUR2,RV_OK,TK_NotStart,PK02FMJ34Z,02F Recv. at Site - 2003-J/JA MP BFW Pumps,,1584.01666666667,176,0,0,0,0,0,0,0,0,,,,2008-01-05 08:01,2008-01-05 08:01,,2007-04-19 17:00,2007-04-19 17:00,2007-04-19 17:00,2007-04-19 17:00,2007-04-19 17:00,2007-04-19 17:00,,2008-01-05 08:01,2008-01-05 08:01,,PT_Normal,,,,,RU0CQdyDQR6qEgqSyM3HCg,,,,N,0,0,,,2007-02-01 02:43,2007-02-04 01:00,hbe4678,hbe4678,2007-04-19 17:00,2007-04-19 17:00,0
4109,12460290,14517,6816204,13329,0,100,N,N,N,CP_Units,TT_FinMile,DT_FixedDrtn,RV_OK,TK_Complete,PK02GMC21Z,02G Recv. at Site - 133-C Fd Gas Compr. Kickback Cooler,,,,0,0,0,0,0,0,0,0,,2006-12-09 00:00,2006-12-09 00:00,2007-12-25 08:01,2007-12-25 08:01,,2007-01-27 00:00,2007-01-27 00:00,,,2007-01-20 08:01,2007-01-20 08:01,,,,,PT_Normal,,,,,bHb/ba0yTveVjRpu1nZ8cQ,,,,N,0,0,,,2007-02-01 02:43,2007-02-04 01:05,hbe4678,hbe4678,,,0
4110,12460291,14517,6816204,13329,0,100,N,N,N,CP_Units,TT_FinMile,DT_FixedDUR2,RV_OK,TK_Complete,PK02MMD42Z,02M Recv. at Site - 144-F Feed Gas KO Drum,,,,0,0,0,0,0,0,0,0,,2006-09-16 00:00,2006-09-16 00:00,2007-12-31 08:01,2007-12-31 08:01,,2007-01-27 00:00,2007-01-27 00:00,,,2006-09-21 08:01,2006-09-21 08:01,,,,,PT_Normal,,,,,U1uqLSRSTviUuQ8K5cztuQ,,,,N,0,0,,,2007-02-01 02:43,2007-02-04 01:05,hbe4678,hbe4678,,,0
4111,12460292,14517,6816204,13329,0,0,N,N,N,CP_Units,TT_FinMile,DT_FixedDUR2,RV_OK,TK_NotStart,PK02LMD42Z,02L Recv. at Site - 102-F1/F2 Raw Gas Seperator/ CO2 Absorber,,1104,279.983333333333,0,0,0,0,0,0,0,0,,,,2007-12-09 08:01,2007-12-09 08:01,,2007-06-09 08:01,2007-06-09 08:01,2007-06-09 08:01,2007-06-09 08:01,2007-06-09 08:01,2007-06-09 08:01,,2007-12-09 08:01,2007-12-09 08:01,,PT_Normal,,,,,web+nec8Sjalb5pLnzRydQ,,,,N,0,0,,,2007-02-01 02:43,2007-02-04 01:00,hbe4678,hbe4678,2007-06-09 08:01,2007-06-09 08:01,0
4112,12460293,14517,6816204,13329,0,0,N,N,N,CP_Units,TT_FinMile,DT_FixedDUR2,RV_OK,TK_NotStart,PK02LMD44Z,02L Recv. at Site - 132-F Lean Solution Flash Tank,,640,759.983333333333,0,0,0,0,0,0,0,0,,,,2007-07-02 08:01,2007-07-02 08:01,,2007-03-31 08:01,2007-03-31 08:01,2007-03-31 08:01,2007-03-31 08:01,2007-03-31 08:01,2007-03-31 08:01,,2007-07-02 08:01,2007-07-02 08:01,,PT_Normal,,,,,E1aw4cdERCOE4w79Ypk5mw,,,,N,0,0,,,2007-02-01 02:43,2007-02-04 01:00,hbe4678,hbe4678,2007-03-31 08:01,2007-03-31 08:01,0
4113,12460294,14517,6816204,13329,0,100,N,N,N,CP_Units,TT_FinMile,DT_FixedDUR2,RV_OK,TK_Complete,PK02LMD47Z,02L Recv. at Site - 103-F CO2 Stripper Cond KO Drum,,,,0,0,0,0,0,0,0,0,,2006-09-16 00:00,2006-09-16 00:00,2007-12-09 08:01,2007-12-09 08:01,,2007-01-27 00:00,2007-01-27 00:00,,,2006-09-21 08:01,2006-09-21 08:01,,,,,PT_Normal,,,,,cl8tkVqOSkGLxd0qVnBf8A,,,,N,0,0,,,2007-02-01 02:43,2007-02-04 01:05,hbe4678,hbe4678,,,0
4114,12460295,14517,6816204,13329,0,0,N,N,N,CP_Units,TT_FinMile,DT_FixedDUR2,RV_OK,TK_NotStart,PK02LMJ32Z,02L Recv. at Site - 107-JA/B/C Lean Solution Pumps,,1536,175.983333333333,0,0,0,0,0,0,0,0,,,,2007-12-02 08:01,2007-12-02 08:01,,2007-03-31 08:01,2007-03-31 08:01,2007-03-31 08:01,2007-03-31 08:01,2007-03-31 08:01,2007-03-31 08:01,,2007-12-02 08:01,2007-12-02 08:01,,PT_Normal,,,,,kSdGFrFuR+SO0cJ28oJXow,,,,N,0,0,,,2007-02-01 02:43,2007-02-04 01:00,hbe4678,hbe4678,2007-03-31 08:01,2007-03-31 08:01,0
4115,12460296,14517,6816207,13330,1,100,N,N,N,CP_Units,TT_Task,DT_FixedDUR2,RV_OK,TK_Complete,EK000MB81A,Develop & Issue Load Sheet for 102-B,,,,0,,0,,24,,,0,,2005-04-15 08:00,2005-04-19 17:00,2007-06-19 08:01,2007-06-19 08:01,,2007-01-27 00:00,2007-01-27 00:00,,,2005-04-15 08:00,2005-04-19 17:00,,,,,PT_Normal,,,,,BWdKIbmlS1alKF3E/25wKQ,,,,N,,,,,2007-02-01 02:43,2007-02-04 01:05,hbe4678,hbe4678,,,0
4116,12460297,14517,6816208,13330,1,100,N,N,N,CP_Units,TT_Task,DT_FixedDUR2,RV_OK,TK_Complete,EK020FP410,FP Electrical Area Classification ISBL -  IPL,,,,0,0,0,0,80,0,0,0,,2005-11-01 08:00,2005-11-10 00:00,2009-02-15 08:01,2009-02-15 08:01,,2007-01-27 00:00,2007-01-27 00:00,,,2005-11-01 08:00,2005-11-14 17:00,,,,,PT_Normal,,,,,3bgc41hzR4e1vq+lPc6t5A,XuQMluVJaEahkQ1+11v+0h,,,N,0,0,,,2007-02-01 02:43,2007-02-04 01:05,hbe4678,hbe4678,,,0
4117,12460298,14517,6816208,13330,1,100,N,N,N,CP_Units,TT_Task,DT_FixedDUR2,RV_OK,TK_Complete,EK000FP005,FP Electrical Area Classification ISBL - ICA,,,,0,0,0,0,80,0,0,0,,2005-06-27 08:00,2005-07-28 00:00,2009-02-15 08:01,2009-02-15 08:01,,2007-01-27 00:00,2007-01-27 00:00,,,2005-06-27 08:00,2005-07-12 17:00,,,,,PT_Normal,,,,,EFY5MmXCR32cwzib+6gEWw,,,,N,0,0,,,2007-02-01 02:43,2007-02-04 01:05,hbe4678,hbe4678,,,0
4118,12460299,14517,6816208,13330,1,100,N,N,N,CP_Units,TT_Task,DT_FixedDUR2,RV_OK,TK_Complete,EK000FP030,FP ISBL Firewater P&IDs - Development & Issue ICA,,,,0,0,0,0,424,0,0,0,,2005-05-06 08:00,2005-07-19 08:00,2009-02-15 08:01,2009-02-15 08:01,,2007-01-27 00:00,2007-01-27 00:00,,,2005-05-06 08:00,2005-07-22 17:00,,,,,PT_Normal,,,,,K6LSVMYMQUy9Hl1XWTy65A,EArQYb5e4ka6+w1YvcBYrB,,,N,0,0,,,2007-02-01 02:43,2007-02-04 01:05,hbe4678,hbe4678,,,0
4119,12460300,14517,6816208,13330,1,100,N,N,N,CP_Units,TT_Task,DT_FixedDUR2,RV_OK,TK_Complete,EK000FP032,FP ISBL Firewater P&IDs - Development & Issue IPL,,,,0,0,0,0,408,0,0,0,,2005-07-20 00:00,2005-11-07 00:00,2009-02-15 08:01,2009-02-15 08:01,,2007-01-27 00:00,2007-01-27 00:00,,,2005-08-01 08:00,2005-10-10 17:00,,,,,PT_Normal,,,,,KBH8rF4KQ0uN0ss2KcOIfQ,F8DAahcERUGY9Qmv6pjJQx,,,N,0,0,,,2007-02-01 02:43,2007-02-04 01:05,hbe4678,hbe4678,,,0
4120,12460301,14517,6816208,13330,1,100,N,N,N,CP_Units,TT_Task,DT_FixedDUR2,RV_OK,TK_Complete,EK000FP034,FP ISBL Firewater P&IDs - Development & Issue IFD,,,,0,0,0,0,520,0,0,0,,2006-06-01 00:00,2006-06-26 17:00,2009-02-15 08:01,2009-02-15 08:01,,2007-01-27 00:00,2007-01-27 00:00,,,2006-06-26 08:00,2006-09-22 17:00,,,,,PT_Normal,,,,,yhsNpODKRjufD+HJmCKMDQ,bf/KF6tWkUCFsWmo/QScUx,,,N,0,0,,,2007-02-01 02:43,2007-02-04 01:05,hbe4678,hbe4678,,,0
4121,12460302,14517,6816208,13330,1,100,N,N,N,CP_Units,TT_Task,DT_FixedDUR2,RV_OK,TK_Complete,EK000FP036,FP ISBL Firewater P&IDs - Development & Issue IFC,,,,0,0,0,0,824,0,0,0,,2005-10-17 08:00,2006-09-27 00:00,2009-02-15 08:01,2009-02-15 08:01,,2007-01-27 00:00,2007-01-27 00:00,,,2005-10-17 08:00,2006-03-10 17:00,,,,,PT_Normal,,,,,oI/BA6nlQd6epN3NnCWUyQ,xkgiITlBJ0W5pauRZ5pXEh,,,N,0,0,,,2007-02-01 02:43,2007-02-04 01:05,hbe4678,hbe4678,,,0
4122,12460303,14517,6816208,13330,1,100,N,N,N,CP_Units,TT_Task,DT_FixedDUR2,RV_OK,TK_Complete,EK020FP480,FP ISBL Fire Protection Eqmt. Location Plans - ICA,,,,0,0,0,0,80,0,0,0,,2005-06-03 00:00,2005-07-29 00:00,2009-02-15 08:01,2009-02-15 08:01,,2007-01-27 00:00,2007-01-27 00:00,,,2005-06-27 08:00,2005-07-12 17:00,,,,,PT_Normal,,,,,vA/CNsrjSgq66iJR6mCAbg,XuQMluVJaEahkQ1+11v+0h,,,N,0,0,,,2007-02-01 02:43,2007-02-04 01:05,hbe4678,hbe4678,,,0
4123,12460304,14517,6816208,13330,1,100,N,N,N,CP_Units,TT_Task,DT_FixedDUR2,RV_OK,TK_Complete,EK020FP500,FP ISBL Fire Protection Eqmt. Location Plans -  IPL,,,,0,0,0,0,80,0,0,0,,2005-11-01 08:00,2005-12-01 00:00,2009-02-15 08:01,2009-02-15 08:01,,2007-01-27 00:00,2007-01-27 00:00,,,2005-11-01 08:00,2005-11-14 17:00,,,,,PT_Normal,,,,,PerKIWRXR4KLmhqozXafkA,+A7qnKr/gUelG0MuuvNGnB,,,N,0,0,,,2007-02-01 02:43,2007-02-04 01:05,hbe4678,hbe4678,,,0
4124,12460305,14517,6816208,13330,1,100,N,N,N,CP_Units,TT_Task,DT_FixedDUR2,RV_OK,TK_Complete,EK020FP450,FP Electrical Area Classification ISBL - IFC,,,,0,0,0,0,80,0,0,0,,2006-05-01 00:00,2006-05-23 00:00,2009-02-15 08:01,2009-02-15 08:01,,2007-01-27 00:00,2007-01-27 00:00,,,2006-05-23 08:00,2006-06-05 17:00,,,,,PT_Normal,,,,,EjO80G2iS/qZaIrYFLk0ww,9bB+CGuoekqXf5qqcZ+kmx,,,N,0,0,,,2007-02-01 02:43,2007-02-04 01:05,hbe4678,hbe4678,,,0
4125,12460306,14517,6816209,13330,0,100,N,N,N,CP_Units,TT_FinMile,DT_FixedDUR2,RV_OK,TK_Complete,EK02DSY170,02D ISBL P&IDs IPL & Line List Issue Milestone,,,,0,0,0,0,0,0,0,0,,2005-11-07 00:00,2005-11-07 00:00,2007-04-24 08:01,2007-04-24 08:01,,2007-01-27 00:00,2007-01-27 00:00,,,2005-11-18 17:00,2005-11-18 17:00,,,,,PT_Normal,,,,,lHU7bW+WSCqD4hmoVwMmnQ,uPdeFKdq4k6u3wqdKBox8h,,,N,0,0,,,2007-02-01 02:43,2007-02-04 01:05,hbe4678,hbe4678,,,0
4126,12460307,14517,6816209,13330,0,100,N,N,N,CP_Units,TT_FinMile,DT_FixedDUR2,RV_OK,TK_Complete,EK02ESY170,02E ISBL P&IDs IPL & Line List Issue Milestone,,,,0,0,0,0,0,0,0,0,,2005-11-07 00:00,2005-11-07 00:00,2007-09-17 08:01,2007-09-17 08:01,,2007-01-27 00:00,2007-01-27 00:00,,,2005-11-11 17:00,2005-11-11 17:00,,,,,PT_Normal,,,,,0NEeTSDJQO+bOSbNP6qPkQ,iE9ijLrPXkmP1I5iRIhDSB,,,N,0,0,,,2007-02-01 02:43,2007-02-04 01:05,hbe4678,hbe4678,,,0
4127,12460308,14517,6816209,13330,0,100,N,N,N,CP_Units,TT_FinMile,DT_FixedDUR2,RV_OK,TK_Complete,EK02FSY170,02F ISBL P&IDs IPL & Line List Issue Milestone,,,,0,0,0,0,0,0,0,0,,2005-11-07 00:00,2005-11-07 00:00,2007-12-29 08:01,2007-12-29 08:01,,2007-01-27 00:00,2007-01-27 00:00,,,2005-11-18 17:00,2005-11-18 17:00,,,,,PT_Normal,,,,,x4dna6nISNik+pyPG7pcDg,N7Y7CEIDHkywJOLyLk6DkB,,,N,0,0,,,2007-02-01 02:43,2007-02-04 01:05,hbe4678,hbe4678,,,0
4128,12460309,14517,6816209,13330,0,100,N,N,N,CP_Units,TT_FinMile,DT_FixedDUR2,RV_OK,TK_Complete,EK02GSY170,02G ISBL P&IDs IPL & Line List Issue Milestone,,,,0,0,0,0,0,0,0,0,,2005-11-07 00:00,2005-11-07 00:00,2007-05-07 08:00,2007-05-07 08:00,,2007-01-27 00:00,2007-01-27 00:00,,,2005-11-18 17:00,2005-11-18 17:00,,,,,PT_Normal,,,,,uqIzVV7zSvSY0AUBq3kMGg,WxJGmDulGUqAEBBNZYZGzx,,,N,0,0,,,2007-02-01 02:43,2007-02-04 01:05,hbe4678,hbe4678,,,0
4129,12460310,14517,6816209,13330,0,100,N,N,N,CP_Units,TT_FinMile,DT_FixedDUR2,RV_OK,TK_Complete,EK02JSY170,02J ISBL P&IDs IPL & Line List Issue Milestone,,,,0,0,0,0,0,0,0,0,,2005-11-07 00:00,2005-11-07 00:00,2007-11-26 08:01,2007-11-26 08:01,,2007-01-27 00:00,2007-01-27 00:00,,,2005-11-11 17:00,2005-11-11 17:00,,,,,PT_Normal,,,,,aGM+MpfCS+ur4fft92SUeQ,FVMuLZrml0ecwOob/zYPXh,,,N,0,0,,,2007-02-01 02:43,2007-02-04 01:05,hbe4678,hbe4678,,,0
4130,12460311,14517,6816209,13330,0,100,N,N,N,CP_Units,TT_FinMile,DT_FixedDUR2,RV_OK,TK_Complete,EK02KSY170,02K ISBL P&IDs IPL & Line List Issue Milestone,,,,0,0,0,0,0,0,0,0,,2005-11-07 00:00,2005-11-07 00:00,2007-06-18 08:00,2007-06-18 08:00,,2007-01-27 00:00,2007-01-27 00:00,,,2005-11-11 17:00,2005-11-11 17:00,,,,,PT_Normal,,,,,nBDRWKr7TYq8iC8FBk6qiw,v/fWBVU6A0+gNpivgCBxZh,,,N,0,0,,,2007-02-01 02:43,2007-02-04 01:05,hbe4678,hbe4678,,,0
4131,12460312,14517,6816209,13330,0,100,N,N,N,CP_Units,TT_FinMile,DT_FixedDUR2,RV_OK,TK_Complete,EK02MSY170,02M ISBL P&IDs IPL & Line List Issue Milestone,,,,0,0,0,0,0,0,0,0,,2005-11-07 00:00,2005-11-07 00:00,2007-05-07 08:00,2007-05-07 08:00,,2007-01-27 00:00,2007-01-27 00:00,,,2005-11-18 17:00,2005-11-18 17:00,,,,,PT_Normal,,,,,dFSq9k2cTT+Tta6aVWd7tQ,/2Xex7ue2kSQLES724BXzx,,,N,0,0,,,2007-02-01 02:43,2007-02-04 01:05,hbe4678,hbe4678,,,0
4132,12460313,14517,6816209,13330,0,100,N,N,N,CP_Units,TT_FinMile,DT_FixedDUR2,RV_OK,TK_Complete,EK02NSY170,02N ISBL P&IDs IPL & Line List Issue Milestone,,,,0,0,0,0,0,0,0,0,,2005-11-07 00:00,2005-11-07 00:00,2007-05-28 08:01,2007-05-28 08:01,,2007-01-27 00:00,2007-01-27 00:00,,,2005-11-18 17:00,2005-11-18 17:00,,,,,PT_Normal,,,,,iG93l4t+RYu80/RItEKRmw,gIt6rt1hl0GB2frwtgLpWh,,,N,0,0,,,2007-02-01 02:43,2007-02-04 01:05,hbe4678,hbe4678,,,0
4133,12460314,14517,6816209,13330,0,100,N,N,N,CP_Units,TT_FinMile,DT_FixedDUR2,RV_OK,TK_Complete,EK02PSY170,02P ISBL P&IDs IPL & Line List Issue Milestone,,,,0,0,0,0,0,0,0,0,,2005-11-07 00:00,2005-11-07 00:00,2007-05-03 08:01,2007-05-03 08:01,,2007-01-27 00:00,2007-01-27 00:00,,,2005-11-18 17:00,2005-11-18 17:00,,,,,PT_Normal,,,,,jp598Go3QjaMTRdMnCqkgg,tnrC+nj+00KtDZ+o0HRaVR,,,N,0,0,,,2007-02-01 02:43,2007-02-04 01:05,hbe4678,hbe4678,,,0
4134,12460315,14517,6816209,13330,0,100,N,N,N,CP_Units,TT_FinMile,DT_FixedDUR2,RV_OK,TK_Complete,EK02QSY170,02Q ISBL P&IDs IPL & Line List Issue Milestone,,,,0,0,0,0,0,0,0,0,,2005-11-07 00:00,2005-11-07 00:00,2007-12-16 08:01,2007-12-16 08:01,,2007-01-27 00:00,2007-01-27 00:00,,,2005-11-18 17:00,2005-11-18 17:00,,,,,PT_Normal,,,,,rPtYoD1pTI+muJe/2KMcGg,T5q6IJRiqEaR3Ab22WXfiR,,,N,0,0,,,2007-02-01 02:43,2007-02-04 01:05,hbe4678,hbe4678,,,0
4135,12460316,14517,6816209,13330,0,100,N,N,N,CP_Units,TT_FinMile,DT_FixedDUR2,RV_OK,TK_Complete,EK02YSY170,02Y ISBL P&IDs IPL & Line List Issue Milestone,,,,0,0,0,0,0,0,0,0,,2005-11-07 00:00,2005-11-07 00:00,2007-04-02 08:00,2007-04-02 08:00,,2007-01-27 00:00,2007-01-27 00:00,,,2005-11-18 17:00,2005-11-18 17:00,,,,,PT_Normal,,,,,I5/bSADCQIefLXHSY2aVhQ,BTAsGI/f4USjXFYaMtgzRx,,,N,0,0,,,2007-02-01 02:43,2007-02-04 01:05,hbe4678,hbe4678,,,0
4136,12460317,14517,6816209,13330,0,100,N,N,N,CP_Units,TT_FinMile,DT_FixedDUR2,RV_OK,TK_Complete,EK020SY090,020 ISBL P&IDs IPL & Line List Issue Milestone,,,,0,0,0,0,0,0,0,0,,2005-11-07 00:00,2005-11-07 00:00,2007-04-16 08:00,2007-04-16 08:00,,2007-01-27 00:00,2007-01-27 00:00,,,2005-11-18 17:00,2005-11-18 17:00,,,,,PT_Normal,,,,,CDg176oHQxGT6j3QQwTnww,anuAuHMibU2mzPt/vTNOOR,,,N,0,0,,,2007-02-01 02:43,2007-02-04 01:05,hbe4678,hbe4678,,,0
4137,12460318,14517,6816209,13330,0,100,N,N,N,CP_Units,TT_FinMile,DT_FixedDUR2,RV_OK,TK_Complete,EK02CSY170,02C ISBL P&IDs IPL & Line List Issue Milestone,,,,0,0,0,0,0,0,0,0,,2005-11-07 00:00,2005-11-07 00:00,2008-02-15 17:00,2008-02-15 17:00,,2007-01-27 00:00,2007-01-27 00:00,,,2005-11-18 17:00,2005-11-18 17:00,,,,,PT_Normal,,,,,5CksLBO9SI+5tOggvFp6PQ,anuAuHMibU2mzPt/vTNOOR,,,N,0,0,,,2007-02-01 02:43,2007-02-04 01:05,hbe4678,hbe4678,,,0
4138,12460319,14517,6816209,13330,0,100,N,N,N,CP_Units,TT_FinMile,DT_FixedDUR2,RV_OK,TK_Complete,EK02HSY170,02H ISBL P&IDs IPL & Line List Issue Milestone,,,,0,0,0,0,0,0,0,0,,2005-11-07 00:00,2005-11-07 00:00,2007-09-06 08:01,2007-09-06 08:01,,2007-01-27 00:00,2007-01-27 00:00,,,2005-11-11 17:00,2005-11-11 17:00,,,,,PT_Normal,,,,,hxyvyYUmSA2uYfy3L+tb5w,CyZgJ9Z9VU2cNNRx7e512x,,,N,0,0,,,2007-02-01 02:43,2007-02-04 01:05,hbe4678,hbe4678,,,0
4139,12460320,14517,6816209,13330,1,100,N,N,N,CP_Units,TT_Task,DT_FixedDUR2,RV_OK,TK_Complete,EK000SY100,020 ISBL P&ID's - Tech Review,,,,0,0,0,0,40,0,0,0,,2005-11-04 00:00,2005-11-04 00:00,2007-07-30 08:01,2007-07-30 08:01,,2007-01-27 00:00,2007-01-27 00:00,,,2005-12-05 08:00,2005-12-09 17:00,,,,,PT_Normal,,,,,3+Nn3/fmTZOQpBw8TbhqDA,GJAYRxpEQkWxscXInmAI4R,,,N,0,0,,,2007-02-01 02:43,2007-02-04 01:05,hbe4678,hbe4678,,,0
4140,12460321,14517,6816209,13330,1,100,N,N,N,CP_Units,TT_Task,DT_FixedDUR2,RV_OK,TK_Complete,EK000SY127,020 ISBL CV & FE Process Data (Almost Copy),,,,0,0,0,0,128,0,0,0,,2005-07-19 08:00,2005-09-23 00:00,2006-12-25 08:00,2006-12-25 08:00,,2007-01-27 00:00,2007-01-27 00:00,,,2005-07-19 08:00,2005-08-09 17:00,,,,,PT_Normal,,,,,C7sAwsGZTCOJczl4mH++dQ,,,,N,0,0,,,2007-02-01 02:43,2007-02-04 01:05,hbe4678,hbe4678,,,0
4141,12460322,14517,6816209,13330,0,100,N,N,N,CP_Units,TT_FinMile,DT_FixedDUR2,RV_OK,TK_Complete,EK02LSY170,02L ISBL P&IDs IPL & Line List Issue Milestone,,,,0,0,0,0,0,0,0,0,,2005-11-07 00:00,2005-11-07 00:00,2007-07-30 08:01,2007-07-30 08:01,,2007-01-27 00:00,2007-01-27 00:00,,,2005-11-18 17:00,2005-11-18 17:00,,,,,PT_Normal,,,,,ZDcCWmekTGKZgFwT5Dun3w,,,,N,0,0,,,2007-02-01 02:43,2007-02-04 01:05,hbe4678,hbe4678,,,0
4142,12460323,14517,6816209,13330,1,100,N,N,N,CP_Units,TT_Task,DT_FixedDUR2,RV_OK,TK_Complete,EK020SY195,020 Issue  Requisition -PSA08  Relief Valves (New Areas),,,,0,0,0,0,80,0,0,0,,2005-10-04 00:00,2005-12-20 00:00,2008-01-23 08:01,2008-01-23 08:01,,2007-01-27 00:00,2007-01-27 00:00,,,2005-10-31 08:00,2005-11-11 17:00,,,,,PT_Normal,,,,,4UZ8+XWkTxif36dtO1RmgA,,,,N,0,0,,,2007-02-01 02:43,2007-02-04 01:05,hbe4678,hbe4678,,,0
4143,12460324,14517,6816209,13330,1,100,N,N,N,CP_Units,TT_Task,DT_FixedDUR2,RV_OK,TK_Complete,EK020SY196,020 Issue  Requisition - PSA08 Relief Valves (Copy Areas),,,,0,0,0,0,80,0,0,0,,2005-11-04 08:01,2005-12-20 00:00,2008-01-23 08:01,2008-01-23 08:01,,2007-01-27 00:00,2007-01-27 00:00,,,2005-11-04 08:01,2005-11-18 08:01,,,,,PT_Normal,,,,,rBzI+3xXRPSBCPsrwZEHWw,,,,N,0,0,,,2007-02-01 02:43,2007-02-04 01:05,hbe4678,hbe4678,,,0
4144,12460325,14517,6816209,13330,1,100,N,N,N,CP_Units,TT_Task,DT_FixedDUR2,RV_OK,TK_Complete,EK020SY197,020 Issue  Requisition - PSA08 Relief Valves (Almost Copy),,,,0,0,0,0,80,0,0,0,,2005-11-04 08:01,2005-12-20 00:00,2008-01-23 08:01,2008-01-23 08:01,,2007-01-27 00:00,2007-01-27 00:00,,,2005-11-04 08:01,2005-11-18 08:01,,,,,PT_Normal,,,,,mtfe/Y1nS8uOrsdgXRMSfw,,,,N,0,0,,,2007-02-01 02:43,2007-02-04 01:05,hbe4678,hbe4678,,,0
4145,12460326,14517,6816209,13330,1,100,N,N,N,CP_Units,TT_Task,DT_FixedDUR2,RV_OK,TK_Complete,EK020SY156,020 SP Item Data Sheets - ISBL,,,,0,0,0,0,176,0,0,0,,2005-10-20 16:00,2006-01-24 00:00,2008-01-09 08:01,2008-01-09 08:01,,2007-01-27 00:00,2007-01-27 00:00,,,2005-10-10 08:00,2005-11-08 17:00,,,,,PT_Normal,,,,,PPv0yoTzTxG60bx3Fvc0Yw,,,,N,0,0,,,2007-02-01 02:43,2007-02-04 01:05,hbe4678,hbe4678,,,0
4146,12460327,14517,6816209,13330,1,100,N,N,N,CP_Units,TT_Task,DT_FixedDUR2,RV_OK,TK_Complete,EK020SY147,020 Relief Valve Calculations - ISBL (Almost Copy),,,,0,0,0,0,120,0,0,0,,2005-08-15 00:00,2005-10-28 17:00,2007-04-16 08:00,2007-04-16 08:00,,2007-01-27 00:00,2007-01-27 00:00,,,2005-08-03 08:00,2005-08-23 17:00,,,,,PT_Normal,,,,,bEOpU2UURzipcCCzGaH7FQ,,,,N,0,0,,,2007-02-01 02:43,2007-02-04 01:05,hbe4678,hbe4678,,,0
4147,12460328,14517,6816209,13330,1,100,N,N,N,CP_Units,TT_Task,DT_FixedDUR2,RV_OK,TK_Complete,EK020SY080,020 ISBL P&ID's - IPL & Line List Issue (New Areas),,,,0,0,0,0,312,0,0,0,,2005-10-17 08:00,2005-11-04 00:00,2006-12-25 08:00,2006-12-25 08:00,,2007-01-27 00:00,2007-01-27 00:00,,,2005-10-17 08:00,2005-12-08 17:00,,,,,PT_Normal,,,,,Z8oKzVWHRHCYS4nmC0suuA,,,,N,0,0,,,2007-02-01 02:43,2007-02-04 01:05,hbe4678,hbe4678,,,0
4148,12460329,14517,6816209,13330,1,100,N,N,N,CP_Units,TT_Task,DT_FixedDUR2,RV_OK,TK_Complete,EK020SY060,020 ISBL P&ID's - IPL & Line List Issue (Copy Areas),,,,0,0,0,0,320,0,0,0,,2005-07-27 08:00,2005-11-04 00:00,2007-04-16 08:00,2007-04-16 08:00,,2007-01-27 00:00,2007-01-27 00:00,,,2005-07-27 08:00,2005-09-20 17:00,,,,,PT_Normal,,,,,DrGjE2n8QzGmP6Ir0W/EuA,,,,N,0,0,,,2007-02-01 02:43,2007-02-04 01:05,hbe4678,hbe4678,,,0
4149,12460330,14517,6816209,13330,1,100,N,N,N,CP_Units,TT_Task,DT_FixedDUR2,RV_OK,TK_Complete,EK020SY070,020 ISBL P&ID's - IPL & Line List Issue(Almost Copy),,,,0,0,0,0,400,0,0,0,,2005-07-27 08:00,2005-11-04 00:00,2007-04-16 08:00,2007-04-16 08:00,,2007-01-27 00:00,2007-01-27 00:00,,,2005-07-27 08:00,2005-10-04 17:00,,,,,PT_Normal,,,,,epyXRySZRe2yUuWutmp8LA,,,,N,0,0,,,2007-02-01 02:43,2007-02-04 01:05,hbe4678,hbe4678,,,0
4150,12460331,14517,6816209,13330,1,100,N,N,N,CP_Units,TT_Task,DT_FixedDUR2,RV_OK,TK_Complete,EK000SY020,020 ISBL Hydraulic Calculations,,,,0,0,0,,368,,0,0,,2005-03-16 08:00,2005-06-17 17:00,2006-12-25 08:00,2006-12-25 08:00,,2007-01-27 00:00,2007-01-27 00:00,,,2005-03-16 08:00,2005-05-18 17:00,,,,,PT_Normal,,,,,YK90v6/0SJWynPbDzmj6KA,,,,N,0,0,,,2007-02-01 02:43,2007-02-04 01:05,hbe4678,hbe4678,,,0
4151,12460332,14517,6816209,13330,1,100,N,N,N,CP_Units,TT_Task,DT_FixedDUR2,RV_OK,TK_Complete,EK020SY020,020 ISBL P&ID development IDR & Line List Issue,,,,0,0,0,,200,,0,0,,2005-03-21 08:00,2005-04-22 17:00,2006-12-25 08:00,2006-12-25 08:00,,2007-01-27 00:00,2007-01-27 00:00,,,2005-03-21 08:00,2005-04-22 17:00,,,,,PT_Normal,,,,,+3e/s3TrRBuuIYxlfW/Q2Q,,,,N,0,0,,,2007-02-01 02:43,2007-02-04 01:05,hbe4678,hbe4678,,,0
4152,12460333,14517,6816209,13330,1,100,N,N,N,CP_Units,TT_Task,DT_FixedDUR2,RV_OK,TK_Complete,EK020SY030,020 ISBL P&ID IDR Meeting milestone,,,,0,0,0,0,16,0,0,0,,2005-05-03 08:00,2005-05-05 00:00,2006-12-25 08:00,2006-12-25 08:00,,2007-01-27 00:00,2007-01-27 00:00,,,2005-05-03 08:00,2005-05-04 17:00,,,,,PT_Normal,,,,,65Ls3+IpTByDh1aFgaHwog,,,,N,0,0,,,2007-02-01 02:43,2007-02-04 01:05,hbe4678,hbe4678,,,0
4153,12460334,14517,6816209,13330,1,100,N,N,N,CP_Units,TT_Task,DT_FixedDUR2,RV_OK,TK_Complete,EK020SY040,020 ISBL P&IDs - ICA & Line List Issue development,,,,0,0,0,0,160,0,0,0,,2005-05-06 08:00,2005-06-20 17:00,2006-12-25 08:00,2006-12-25 08:00,,2007-01-27 00:00,2007-01-27 00:00,,,2005-05-06 08:00,2005-06-03 17:00,,,,,PT_Normal,,,,,aicM99ojQUem+YUi90u6Cw,,,,N,0,0,,,2007-02-01 02:43,2007-02-04 01:05,hbe4678,hbe4678,,,0
4154,12460335,14517,6816209,13330,1,100,N,N,N,CP_Units,TT_Task,DT_FixedDUR2,RV_OK,TK_Complete,EK000SY125,020 ISBL CV & FE Process Data (New Areas),,,,0,0,0,0,192,0,0,0,,2005-07-25 00:00,2005-09-23 00:00,2006-12-25 08:00,2006-12-25 08:00,,2007-01-27 00:00,2007-01-27 00:00,,,2005-08-03 08:00,2005-09-05 17:00,,,,,PT_Normal,,,,,zNx4OfO6RUiFU5XUEbX4/w,,,,N,0,0,,,2007-02-01 02:43,2007-02-04 01:05,hbe4678,hbe4678,,,0
4155,12460336,14517,6816209,13330,1,100,N,N,N,CP_Units,TT_Task,DT_FixedDUR2,RV_OK,TK_Complete,EK000SY126,020 ISBL CV & FE Process Data (Copy Areas),,,,0,0,0,0,160,0,0,0,,2005-07-06 08:00,2005-09-23 00:00,2006-12-25 08:00,2006-12-25 08:00,,2007-01-27 00:00,2007-01-27 00:00,,,2005-07-06 08:00,2005-08-02 17:00,,,,,PT_Normal,,,,,Y5nT1xcsTfuvOAZo+VQkng,,,,N,0,0,,,2007-02-01 02:43,2007-02-04 01:05,hbe4678,hbe4678,,,0
4156,12460337,14517,6816209,13330,0,100,N,N,N,CP_Units,TT_FinMile,DT_FixedDUR2,RV_OK,TK_Complete,EK020SY050,020 ISBL P&IDs - ICA & Line List Issue Milestone,,,,0,0,0,0,0,0,0,0,,2005-06-20 17:00,2005-06-20 17:00,2006-12-25 08:00,2006-12-25 08:00,,2007-01-27 00:00,2007-01-27 00:00,,,2005-06-20 17:00,2005-06-20 17:00,,,,,PT_Normal,,,,,PD4ovKFXT8mwWTSdLnNXfw,,,,N,0,0,,,2007-02-01 02:43,2007-02-04 01:05,hbe4678,hbe4678,,,0
4157,12460338,14517,6816209,13330,1,100,N,N,N,CP_Units,TT_Task,DT_FixedDUR2,RV_OK,TK_Complete,EK020SY145,020 Relief Valve Calculations - ISBL (New Areas),,,,0,0,0,0,120,0,0,0,,2005-09-23 08:00,2005-10-28 17:00,2006-12-25 08:00,2006-12-25 08:00,,2007-01-27 00:00,2007-01-27 00:00,,,2005-09-23 08:00,2005-10-13 17:00,,,,,PT_Normal,,,,,FbjlxkVpTK6QqeM2VhCb8Q,,,,N,0,0,,,2007-02-01 02:43,2007-02-04 01:05,hbe4678,hbe4678,,,0
4158,12460339,14517,6816209,13330,1,100,N,N,N,CP_Units,TT_Task,DT_FixedDUR2,RV_OK,TK_Complete,EK020SY146,020 Relief Valve Calculations - ISBL (Copy Areas),,,,0,0,0,0,120,0,0,0,,2005-08-15 00:00,2005-10-28 17:00,2007-04-15 08:01,2007-04-15 08:01,,2007-01-27 00:00,2007-01-27 00:00,,,2005-08-04 08:00,2005-08-24 17:00,,,,,PT_Normal,,,,,cZiSsQ35TTeOJV+2BtSEvQ,,,,N,0,0,,,2007-02-01 02:43,2007-02-04 01:05,hbe4678,hbe4678,,,0
4159,12460340,14517,6816209,13330,0,100,N,N,N,CP_Units,TT_FinMile,DT_FixedDUR2,RV_OK,TK_Complete,EK02ASY170,02A ISBL P&IDs IPL & Line List Issue Milestone,,,,0,0,0,0,0,0,0,0,,2005-11-07 00:00,2005-11-07 00:00,2007-04-16 08:00,2007-04-16 08:00,,2007-01-27 00:00,2007-01-27 00:00,,,2005-11-11 17:00,2005-11-11 17:00,,,,,PT_Normal,,,,,Fzhm14n+R/Wjxc4/9W7Y8A,anuAuHMibU2mzPt/vTNOOR,,,N,0,0,,,2007-02-01 02:43,2007-02-04 01:05,hbe4678,hbe4678,,,0
4160,12460341,14517,6816209,13330,0,100,N,N,N,CP_Units,TT_FinMile,DT_FixedDUR2,RV_OK,TK_Complete,EK02BSY170,02B ISBL P&IDs IPL & Line List Issue Milestone,,,,0,0,0,0,0,0,0,0,,2005-11-07 00:00,2005-11-07 00:00,2008-02-02 08:01,2008-02-02 08:01,,2007-01-27 00:00,2007-01-27 00:00,,,2005-11-11 17:00,2005-11-11 17:00,,,,,PT_Normal,,,,,shAbHY3zSJCGjNff88uc8w,sIVJvODVr0SnYrJee0/IVR,,,N,0,0,,,2007-02-01 02:43,2007-02-04 01:05,hbe4678,hbe4678,,,0
4161,12460342,14517,6816215,13330,1,100,N,N,N,CP_Units,TT_Task,DT_FixedDUR2,RV_OK,TK_Complete,EK000CV071,02C & 02G Design of Compressor Table Top,,,,0,0,0,0,600,0,0,0,,2006-02-27 08:01,2006-04-05 00:00,2007-07-02 08:01,2007-07-02 08:01,,2007-01-27 00:00,2007-01-27 00:00,,,2006-02-27 08:01,2006-06-12 08:01,,,,,PT_Normal,,,,,vYTYoQvDSKylRupoENEHgw,,,,N,0,0,,,2007-02-01 02:43,2007-02-04 01:05,hbe4678,hbe4678,,,0
4162,12460343,14517,6816216,4047,1,100,N,N,N,CP_Drtn,TT_Task,DT_FixedDUR2,RV_OK,TK_Complete,EK020ELEE0,Tie-in List - IFC,,,,0,0,0,0,1400,0,0,0,,2006-01-28 00:00,2006-10-02 17:00,2009-02-15 08:01,2009-02-15 08:01,,2007-01-27 00:00,2007-01-27 00:00,,,2006-01-30 08:00,2006-09-29 17:00,,,,,PT_Normal,,,,,kOn7SWH9Q6i8Nixsp/aq0g,,,,N,0,0,,,2007-02-01 02:43,2007-02-04 01:05,hbe4678,hbe4678,,,0
4163,12460344,14517,6816216,4047,1,0,N,N,N,CP_Drtn,TT_Task,DT_FixedDUR2,RV_OK,TK_Active,EK020ELEN2,02 MV  WIRING DIAGRAMS & CTL SCHEMATICS - IFC,,2448,0,344,0,0,0,240,0,0,0,2006-10-20 00:00,2006-10-20 08:00,,2008-04-01 08:00,2008-05-29 17:00,2007-03-28 17:00,2007-01-29 08:00,2007-03-28 17:00,2007-01-29 08:00,2007-03-28 17:00,2006-10-20 08:00,2006-11-30 17:00,,2008-04-01 08:00,2008-05-29 17:00,CS_MSOA,PT_Normal,,,,,uiBdiUzjQjq+4gSGhBO2Cw,,,,N,0,0,,,2007-02-01 02:43,2007-02-03 00:30,hbe4678,hbe4678,2007-01-29 08:00,2007-03-28 17:00,344
4164,12460345,14517,6816216,13330,1,100,N,N,N,CP_Units,TT_Task,DT_FixedDUR2,RV_OK,TK_Complete,EK000EL030,Cable Specification,,,,0,,0,,80,,,0,,2005-03-28 08:00,2005-03-31 17:00,2009-02-15 08:01,2009-02-15 08:01,,2007-01-27 00:00,2007-01-27 00:00,,,2005-03-28 08:00,2005-04-08 17:00,,,,,PT_Normal,,,,,+AwsjcC7Rci88bAno1te7Q,,,,N,,,,,2007-02-01 02:43,2007-02-04 01:05,hbe4678,hbe4678,,,0
4165,12460346,14517,6816216,13330,1,100,N,N,N,CP_Units,TT_Task,DT_FixedDUR2,RV_OK,TK_Complete,EK020EL100,Overall One line diagrams - ICA Ammonia,,,,0,0,0,,640,,0,0,,2005-03-14 08:00,2005-11-10 00:00,2007-05-23 08:00,2007-05-23 08:00,,2007-01-27 00:00,2007-01-27 00:00,,,2005-03-14 08:00,2005-07-06 17:00,,,,,PT_Normal,,,,,XFDbm6H+RiS4xmLz1XvCfw,,,,N,0,0,,,2007-02-01 02:43,2007-02-04 01:05,hbe4678,hbe4678,,,0
4166,12460347,14517,6816216,13330,1,100,N,N,N,CP_Units,TT_Task,DT_FixedDUR2,RV_OK,TK_Complete,EK020EL045,Preliminary Load Summary - IFI,,,,0,0,0,,160,,0,0,,2005-03-31 08:00,2005-04-21 00:00,2007-03-07 08:01,2007-03-07 08:01,,2007-01-27 00:00,2007-01-27 00:00,,,2005-03-31 08:00,2005-04-27 17:00,,,,,PT_Normal,,,,,+HJEaZXWR7CIjNdgZcJgTw,,,,N,0,0,,,2007-02-01 02:43,2007-02-04 01:05,hbe4678,hbe4678,,,0
4167,12460348,14517,6816216,13330,1,100,N,N,N,CP_Units,TT_Task,DT_FixedDUR2,RV_OK,TK_Complete,EK020EL125,Electrical Load List - First IFD,,,,0,0,0,0,440,0,0,0,,2005-12-01 00:00,2005-12-13 00:00,2007-03-07 08:01,2007-03-07 08:01,,2007-01-27 00:00,2007-01-27 00:00,,,2006-01-30 08:00,2006-04-14 17:00,,,,,PT_Normal,,,,,uozsJYSfSSmS5EHr9s77eQ,,,,N,0,0,,,2007-02-01 02:43,2007-02-04 01:05,hbe4678,hbe4678,,,0
4168,12460349,14517,6816216,13330,1,100,N,N,N,CP_Units,TT_Task,DT_FixedDUR2,RV_OK,TK_Complete,EK020EL110,Client Review of Overall Oneline Diagrams,,,,0,0,0,0,80,0,0,0,,2005-11-10 00:00,2005-11-25 00:00,2007-05-23 08:00,2007-05-23 08:00,,2007-01-27 00:00,2007-01-27 00:00,,,2005-11-14 08:00,2005-11-25 17:00,,,,,PT_Normal,,,,,JSYHp+JgTZeGcK1cm7QpRw,dV67VMXhdk2SZh8aSrgmHx,,,N,0,0,,,2007-02-01 02:43,2007-02-04 01:05,hbe4678,hbe4678,,,0
4169,12460350,14517,6816216,13330,1,100,N,N,N,CP_Units,TT_Task,DT_FixedDUR2,RV_OK,TK_Complete,EK020EL121,Overall One line Diagrams - IFD,,,,0,0,0,0,560,0,0,0,,2006-07-24 08:00,2006-09-08 00:00,2007-05-23 08:00,2007-05-23 08:00,,2007-01-27 00:00,2007-01-27 00:00,,,2006-07-24 08:00,2006-10-27 17:00,,,,,PT_Normal,,,,,NF3tyncjQ12wrMGwhy/aKQ,PFUg+t6LVUmNLMIr0APq2x,,,N,0,0,,,2007-02-01 02:43,2007-02-04 01:05,hbe4678,hbe4678,,,0
4170,12460351,14517,6816216,13330,1,0,N,N,N,CP_Units,TT_Task,DT_FixedDUR2,RV_OK,TK_Active,EK020EL130,Overall One line Diagrams - IFC,,656,0,24,0,0,0,480,0,0,0,,2006-09-11 08:00,,2007-05-23 08:00,2007-05-25 17:00,2007-01-31 17:00,2007-01-29 08:00,2007-01-31 17:00,2007-01-29 08:00,2007-01-31 17:00,2006-09-11 08:00,2006-12-01 17:00,,2007-05-23 08:00,2007-05-25 17:00,,PT_Normal,,,,,E6tNuzEiSHi91tw9nRpNIA,/DlUcoaH30Crqc2rZsB0nh,,,N,0,0,,,2007-02-01 02:43,2007-02-01 02:43,hbe4678,hbe4678,2007-01-29 08:00,2007-01-31 17:00,24
4171,12460352,14517,6816216,13330,1,100,N,N,N,CP_Units,TT_Task,DT_FixedDUR2,RV_OK,TK_Complete,EK020EL200,First Check Estimate - Electrical,,,,0,0,0,0,240,0,0,0,,2006-01-30 08:00,2006-02-28 17:00,2007-06-03 17:00,2007-06-03 17:00,,2007-01-27 00:00,2007-01-27 00:00,,,2006-01-30 08:00,2006-03-10 17:00,,,,,PT_Normal,,,,,odXQ0/MGQTqa50b8EjCX5w,9rkYhnUPZUS2As3qHVe6oB,,,N,0,0,,,2007-02-01 02:43,2007-02-04 01:05,hbe4678,hbe4678,,,0
4172,12460353,14517,6816216,13330,1,100,N,N,N,CP_Units,TT_Task,DT_FixedDUR2,RV_OK,TK_Complete,EK020EL210,Production Check Estimate - Electrical,,,,0,0,0,0,240,0,0,0,,2006-10-30 08:00,2006-11-24 00:00,2009-02-15 08:01,2009-02-15 08:01,,2007-01-27 00:00,2007-01-27 00:00,,,2006-10-30 08:00,2006-12-08 17:00,,,,,PT_Normal,,,,,7e2+KL2USWaOGtl3lMFUpA,9yDco/WLjkei8CaItn+/ch,,,N,0,0,,,2007-02-01 02:43,2007-02-04 01:05,hbe4678,hbe4678,,,0
4173,12460354,14517,6816216,13330,1,100,N,N,N,CP_Units,TT_Task,DT_FixedDUR2,RV_OK,TK_Complete,EK020EL126,Electrical Load List - Revised IFD w/Outstanding Equip. Data,,,,0,0,0,0,240,0,0,0,,2006-01-13 00:00,2006-07-19 17:00,2007-05-23 08:00,2007-05-23 08:00,,2007-01-27 00:00,2007-01-27 00:00,,,2006-03-30 08:00,2006-05-10 17:00,,,,,PT_Normal,,,,,4+ZmDZqNSbGqvRy9EFhNmw,LTZLl+bWE0y0Q7pXwisE4h,,,N,0,0,,,2007-02-01 02:43,2007-02-04 01:05,hbe4678,hbe4678,,,0
4174,12460355,14517,6816216,4047,1,100,N,N,N,CP_Drtn,TT_Task,DT_FixedDUR2,RV_OK,TK_Complete,EK020ELEC2,"Short Circuit, Load Flow Motor starting",,,,0,0,0,0,320,0,0,0,,2006-02-10 00:00,2006-08-31 00:00,2007-05-25 17:00,2007-05-25 17:00,,2007-01-27 00:00,2007-01-27 00:00,,,2006-01-30 08:00,2006-03-24 17:00,,,,,PT_Normal,,,,,mnTWTyMVTQeDDQrZH8icFQ,,,,N,0,0,,,2007-02-01 02:43,2007-02-04 01:05,hbe4678,hbe4678,,,0
4175,12460356,14517,6816216,4047,1,100,N,N,N,CP_Drtn,TT_Task,DT_FixedDUR2,RV_OK,TK_Complete,EK020ELG70,Construction & Operation Interfac.,,,,0,0,0,0,880,0,0,0,,2006-08-01 00:00,2006-09-11 00:00,2009-02-15 08:01,2009-02-15 08:01,,2007-01-27 00:00,2007-01-27 00:00,,,2006-09-11 08:00,2007-02-09 17:00,,,,,PT_Normal,,,,,QCkd1uMuTW+kXcvWBpNYwQ,,,,N,0,0,,,2007-02-01 02:43,2007-02-04 01:05,hbe4678,hbe4678,,,0
4176,12460357,14517,6816216,4047,1,100,N,N,N,CP_Drtn,TT_Task,DT_FixedDUR2,RV_OK,TK_Complete,EK020ELEJ1,"Lighting, Installation Details",,,,0,0,0,0,8,0,0,0,,2006-01-28 00:00,2006-01-30 17:00,2008-03-02 08:01,2008-03-02 08:01,,2007-01-27 00:00,2007-01-27 00:00,,,2006-01-30 08:00,2006-01-30 17:00,,,,,PT_Normal,,,,,6Dn7wN8kSKipLSxhfF7AFQ,,,,N,0,0,,,2007-02-01 02:43,2007-02-04 01:05,hbe4678,hbe4678,,,0
4177,12460358,14517,6816216,4047,1,100,N,N,N,CP_Drtn,TT_Task,DT_FixedDUR2,RV_OK,TK_Complete,EK020ELEK1,"A/G Power & Control, Details",,,,0,0,0,0,8,0,0,0,,2006-01-28 00:00,2006-01-30 17:00,2007-05-07 08:00,2007-05-07 08:00,,2007-01-27 00:00,2007-01-27 00:00,,,2006-01-30 08:00,2006-01-30 17:00,,,,,PT_Normal,,,,,KnDUUMdNRRG2WYU9ZcK28g,,,,N,0,0,,,2007-02-01 02:43,2007-02-04 01:05,hbe4678,hbe4678,,,0
4178,12460359,14517,6816216,4047,1,100,N,N,N,CP_Drtn,TT_Task,DT_FixedDUR2,RV_OK,TK_Complete,EK020ELEM1,Cable & Raceway Schedule - IFC,,,,0,0,0,0,400,0,0,0,,2006-11-13 08:00,2007-01-29 00:00,2007-05-07 08:00,2007-05-07 08:00,,2007-01-27 00:00,2007-01-27 00:00,,,2006-11-13 08:00,2007-01-19 17:00,,,,,PT_Normal,,,,,LOscxnURRRiz9egEhAtUxQ,,,,N,0,0,,,2007-02-01 02:43,2007-02-04 01:05,hbe4678,hbe4678,,,0
4179,12460360,14517,6816216,4047,1,0,N,N,N,CP_Drtn,TT_Task,DT_FixedDUR2,RV_OK,TK_Active,EK020ELEN1,02 LV Wiring Diagrams - IFC,,2368,0,112,0,0,0,240,0,0,0,2006-10-20 00:00,2006-10-20 08:00,,2008-03-18 08:00,2008-04-04 17:00,2007-02-15 17:00,2007-01-29 08:00,2007-02-15 17:00,2007-01-29 08:00,2007-02-15 17:00,2006-10-20 08:00,2006-11-30 17:00,,2008-03-18 08:00,2008-04-04 17:00,CS_MSOA,PT_Normal,,,,,IdkfJUHeTxOq/IIYIDDWyQ,,,,N,0,0,,,2007-02-01 02:43,2007-02-01 02:43,hbe4678,hbe4678,2007-01-29 08:00,2007-02-15 17:00,112
4180,12460361,14517,6816216,4047,1,0,N,N,N,CP_Drtn,TT_Task,DT_FixedDUR2,RV_OK,TK_Active,EK020ELEN3,02 Equipment Interconnection Diagrams - IFC,,4088,0,192,0,0,0,960,0,0,0,,2007-01-02 00:00,,2009-01-13 08:00,2009-02-13 17:00,2007-03-01 17:00,2007-01-29 08:00,2007-03-01 17:00,2007-01-29 08:00,2007-03-01 17:00,2006-11-01 08:00,2007-04-17 17:00,,2009-01-13 08:00,2009-02-13 17:00,,PT_Normal,,,,,clW4vX2ATK+U9Zz0aJvR0w,,,,N,0,0,,,2007-02-01 02:43,2007-02-01 02:43,hbe4678,hbe4678,2007-01-29 08:00,2007-03-01 17:00,192
4181,12460362,14517,6816216,4047,1,100,N,N,N,CP_Drtn,TT_Task,DT_FixedDUR2,RV_OK,TK_Complete,EK020ELG20,Standard Job Specification,,,,0,0,0,0,8,0,0,0,,2006-01-28 00:00,2006-01-30 17:00,2007-05-25 17:00,2007-05-25 17:00,,2007-01-27 00:00,2007-01-27 00:00,,,2006-01-30 08:00,2006-01-30 17:00,,,,,PT_Normal,,,,,dLkRTEouTJyNNcU7NHcORA,,,,N,0,0,,,2007-02-01 02:43,2007-02-04 01:05,hbe4678,hbe4678,,,0
4182,12460363,14517,6816216,4047,1,100,N,N,N,CP_Drtn,TT_Task,DT_FixedDUR2,RV_OK,TK_Complete,EK020ELG40,Studies/reports,,,,0,0,0,0,8,0,0,0,,2005-06-03 00:00,2005-06-29 00:00,2009-02-15 08:01,2009-02-15 08:01,,2007-01-27 00:00,2007-01-27 00:00,,,2006-01-30 08:00,2006-01-30 17:00,,,,,PT_Normal,,,,,CRdHMN3TQBi5RPkhZTvgyw,,,,N,0,0,,,2007-02-01 02:43,2007-02-04 01:05,hbe4678,hbe4678,,,0
4183,12460364,14517,6816216,4047,1,100,N,N,N,CP_Drtn,TT_Task,DT_FixedDUR2,RV_OK,TK_Complete,EK020ELEC3,Protective Device Coordination,,,,0,0,0,0,880,0,0,0,,2006-10-16 08:00,2006-12-08 17:00,2009-02-15 08:01,2009-02-15 08:01,,2007-01-27 00:00,2007-01-27 00:00,,,2006-10-16 08:00,2007-03-16 17:00,,,,,PT_Normal,,,,,8bu5N6wcQhuzIWCuZYA1yw,,,,N,0,0,,,2007-02-01 02:43,2007-02-04 01:05,hbe4678,hbe4678,,,0
4184,12460365,14517,6816216,4047,1,100,N,N,N,CP_Drtn,TT_Task,DT_FixedDUR2,RV_OK,TK_Complete,EK020ELEC4,Conductor Ampacity,,,,0,0,0,0,8,0,0,0,,2006-01-28 00:00,2006-01-30 17:00,2007-05-25 17:00,2007-05-25 17:00,,2007-01-27 00:00,2007-01-27 00:00,,,2006-01-30 08:00,2006-01-30 17:00,,,,,PT_Normal,,,,,snjJxr1fQvCqUCQ1PJkjIA,,,,N,0,0,,,2007-02-01 02:43,2007-02-04 01:05,hbe4678,hbe4678,,,0
4185,12460366,14517,6816216,4047,1,100,N,N,N,CP_Drtn,TT_Task,DT_FixedDUR2,RV_OK,TK_Complete,EK020ELED0,Conceptual Substation Building Layout,,,,0,0,0,0,8,0,0,0,,2006-01-28 00:00,2006-01-30 17:00,2007-03-07 08:01,2007-03-07 08:01,,2007-01-27 00:00,2007-01-27 00:00,,,2006-01-30 08:00,2006-01-30 17:00,,,,,PT_Normal,,,,,m3naQamBTb+Lk3S0O0sSBg,,,,N,0,0,,,2007-02-01 02:43,2007-02-04 01:05,hbe4678,hbe4678,,,0
4186,12460367,14517,6816216,4047,1,100,N,N,N,CP_Drtn,TT_Task,DT_FixedDUR2,RV_OK,TK_Complete,EK020EL000,ISBL Motor & Drivers - Prod. V. Data (information only),,,,0,0,0,0,376,0,0,0,,2006-01-16 00:00,2006-11-24 00:00,2009-02-13 17:00,2009-02-13 17:00,,2007-02-21 17:00,2007-02-21 17:00,,,2006-03-21 08:00,2006-05-24 17:00,,,,,PT_Normal,,,,,5Lw8h9lDQRyoMRo4rCIcGg,,,,N,0,0,,,2007-02-01 02:43,2007-02-04 01:05,hbe4678,hbe4678,,,0
4187,12460368,14517,6816216,13330,1,100,N,N,N,CP_Units,TT_Task,DT_FixedDUR2,RV_OK,TK_Complete,EK020EL040,Load Summary - IFD,,,,0,0,0,0,560,0,0,0,,2005-12-01 00:00,2005-12-13 00:00,2007-05-23 08:00,2007-05-23 08:00,,2007-01-27 00:00,2007-01-27 00:00,,,2006-01-09 08:00,2006-04-14 17:00,,,,,PT_Normal,,,,,zlUURXZuSZaxGgEJ6aG9eA,axG6vd0TOkmQHpNrqIBvlR,,,N,0,0,,,2007-02-01 02:43,2007-02-04 01:05,hbe4678,hbe4678,,,0
4188,12460369,14517,6816216,13330,1,100,N,N,N,CP_Units,TT_Task,DT_FixedDUR2,RV_OK,TK_Complete,EK020EL170,MCC One line diagrams - ICA,,,,0,0,0,,1096,,0,0,,2005-03-14 08:00,2005-12-21 00:00,2007-12-18 08:00,2007-12-18 08:00,,2007-01-27 00:00,2007-01-27 00:00,,,2005-03-14 08:00,2005-09-23 17:00,,,,,PT_Normal,,,,,MZ2bfA/jRCGF3LXiVHQ/8w,YrZZYQG/kUWtsPQMdhp8CR,,,N,0,0,,,2007-02-01 02:43,2007-02-04 01:05,hbe4678,hbe4678,,,0
4189,12460370,14517,6816216,13330,1,100,N,N,N,CP_Units,TT_Task,DT_FixedDUR2,RV_OK,TK_Complete,EK020EL175,Client Review of MCC Oneline Diagrams,,,,0,0,0,0,80,0,0,0,,2005-12-12 00:00,2005-12-23 00:00,2007-12-18 08:00,2007-12-18 08:00,,2007-01-27 00:00,2007-01-27 00:00,,,2006-01-03 08:00,2006-01-16 17:00,,,,,PT_Normal,,,,,bwsPrVj4T4m0LI5JmAoRRA,/KVr6HGog0qBeQMiTZMKSR,,,N,0,0,,,2007-02-01 02:43,2007-02-04 01:05,hbe4678,hbe4678,,,0
4190,12460371,14517,6816216,13330,1,100,N,N,N,CP_Units,TT_Task,DT_FixedDUR2,RV_OK,TK_Complete,EK020EL180,MCC One line Diagrams - IFD,,,,0,0,0,0,400,0,0,0,,2006-05-04 08:00,2006-09-08 17:00,2007-12-18 08:00,2007-12-18 08:00,,2007-01-27 00:00,2007-01-27 00:00,,,2006-05-04 08:00,2006-07-12 17:00,,,,,PT_Normal,,,,,BFP8fvx+R3mrWGMzF+xYZw,JCRvs1XNJkaf4CQNCi8ttR,,,N,0,0,,,2007-02-01 02:43,2007-02-04 01:05,hbe4678,hbe4678,,,0
4191,12460372,14517,6816216,13330,1,0,N,N,N,CP_Units,TT_Task,DT_FixedDUR2,RV_OK,TK_Active,EK020EL185,MCC One line Diagrams - IFC,,1848,0,192,0,0,0,400,0,0,0,,2006-09-25 00:00,,2007-12-18 08:00,2008-01-18 17:00,2007-03-01 17:00,2007-01-29 08:00,2007-03-01 17:00,2007-01-29 08:00,2007-03-01 17:00,2006-10-02 08:00,2006-12-08 17:00,,2007-12-18 08:00,2008-01-18 17:00,,PT_Normal,,,,,5QOt+H3lRQC8QHwLSrIvPQ,7lTr7bAX506ja2YnJuCp9h,,,N,0,0,,,2007-02-01 02:43,2007-02-01 02:43,hbe4678,hbe4678,2007-01-29 08:00,2007-03-01 17:00,192
4192,12460373,14517,6816216,13330,1,100,N,N,N,CP_Units,TT_Task,DT_FixedDUR2,RV_OK,TK_Complete,EK020EL123,Preliminary Electrical Load List - IFI,,,,0,0,0,,160,,0,0,,2005-03-31 08:00,2005-04-21 00:00,2007-03-07 08:01,2007-03-07 08:01,,2007-01-27 00:00,2007-01-27 00:00,,,2005-03-31 08:00,2005-04-27 17:00,,,,,PT_Normal,,,,,Aaw7k1NkR+G7h4u6khrO/w,axG6vd0TOkmQHpNrqIBvlR,,,N,0,0,,,2007-02-01 02:43,2007-02-04 01:05,hbe4678,hbe4678,,,0
4193,12460374,14517,6816216,13330,1,100,N,N,N,CP_Units,TT_Task,DT_FixedDUR2,RV_OK,TK_Complete,EK020EL150,Switchgear One line diagrams - ICA Ammonia,,,,0,0,0,,856,,0,0,,2005-03-14 08:00,2005-12-15 17:00,2007-12-18 08:00,2007-12-18 08:00,,2007-01-27 00:00,2007-01-27 00:00,,,2005-03-14 08:00,2005-08-12 17:00,,,,,PT_Normal,,,,,1TP4Xr00Q0ebyOlAf4UAFw,dV67VMXhdk2SZh8aSrgmHx,,,N,0,0,,,2007-02-01 02:43,2007-02-04 01:05,hbe4678,hbe4678,,,0
4194,12460375,14517,6816216,13330,1,100,N,N,N,CP_Units,TT_Task,DT_FixedDUR2,RV_OK,TK_Complete,EK020EL155,Client Review of Switchgear Oneline Diagrams,,,,0,0,0,0,80,0,0,0,,2005-11-16 00:00,2005-11-30 00:00,2007-12-18 08:00,2007-12-18 08:00,,2007-01-27 00:00,2007-01-27 00:00,,,2005-12-13 08:00,2005-12-27 17:00,,,,,PT_Normal,,,,,96PE8GuBR7qtHL34MSb5rA,PFUg+t6LVUmNLMIr0APq2x,,,N,0,0,,,2007-02-01 02:43,2007-02-04 01:05,hbe4678,hbe4678,,,0
4195,12460376,14517,6816216,13330,1,100,N,N,N,CP_Units,TT_Task,DT_FixedDUR2,RV_OK,TK_Complete,EK020EL160,Switchgear One line Diagrams - IFD,,,,0,0,0,0,400,0,0,0,,2006-05-04 08:00,2006-09-08 17:00,2007-12-18 08:00,2007-12-18 08:00,,2007-01-27 00:00,2007-01-27 00:00,,,2006-05-04 08:00,2006-07-12 17:00,,,,,PT_Normal,,,,,cba7ApAyR32BaZ4mDOaL+w,/DlUcoaH30Crqc2rZsB0nh,,,N,0,0,,,2007-02-01 02:43,2007-02-04 01:05,hbe4678,hbe4678,,,0
4196,12460377,14517,6816216,13330,1,0,N,N,N,CP_Units,TT_Task,DT_FixedDUR2,RV_OK,TK_Active,EK020EL165,Switchgear One line Diagrams - IFC,,1848,0,184,0,0,0,400,0,0,0,,2006-09-25 00:00,,2007-12-18 08:00,2008-01-17 17:00,2007-02-28 17:00,2007-01-29 08:00,2007-02-28 17:00,2007-01-29 08:00,2007-02-28 17:00,2006-10-02 08:00,2006-12-08 17:00,,2007-12-18 08:00,2008-01-17 17:00,,PT_Normal,,,,,w6CI0JPNTjm0xsmqyZrpYA,yi26xGILZUm2NsVcYm6vOx,,,N,0,0,,,2007-02-01 02:43,2007-02-01 02:43,hbe4678,hbe4678,2007-01-29 08:00,2007-02-28 17:00,184
4197,12460378,14517,6816216,13330,1,100,N,N,N,CP_Units,TT_Task,DT_FixedDUR2,RV_OK,TK_Complete,EK000EL010,Electrical Specifications,,,,0,0,0,0,168,0,0,0,,2005-05-12 08:00,2005-06-30 17:00,2009-02-15 08:01,2009-02-15 08:01,,2007-01-27 00:00,2007-01-27 00:00,,,2005-05-12 08:00,2005-06-10 17:00,,,,,PT_Normal,,,,,PU7hX8jvQT239Z9iJ1Y3cw,,,,N,0,0,,,2007-02-01 02:43,2007-02-04 01:05,hbe4678,hbe4678,,,0
4198,12460379,14517,6816220,13330,1,100,N,N,N,CP_Units,TT_Task,DT_FixedDUR2,RV_OK,TK_Complete,EK02YIC300,02Y In Line Instrument Approved Vendor Data,,,,0,0,0,0,160,0,0,0,,2006-02-01 00:00,2006-05-15 17:00,2006-12-25 08:00,2006-12-25 08:00,,2007-01-27 00:00,2007-01-27 00:00,,,2005-11-03 08:00,2005-11-30 17:00,,,,,PT_Normal,,,,,2Lz4mRU+QniOZVIZ9ERVAg,dEhLAjPAz0C+qx67mv1frQ,,,N,0,0,,,2007-02-01 02:43,2007-02-04 01:05,hbe4678,hbe4678,,,0
4199,12460380,14517,6816220,13330,1,100,N,N,N,CP_Units,TT_Task,DT_FixedDUR2,RV_OK,TK_Complete,EK000I1271,Magnetic Flow Meters Purchase ERW,,,,0,0,0,0,40,0,0,0,,2005-10-25 00:00,2005-11-01 00:00,2009-02-15 08:01,2009-02-15 08:01,,2007-01-27 00:00,2007-01-27 00:00,,,2005-11-24 08:00,2005-11-30 17:00,,,,,PT_Normal,,,,,5hfZYKXQSzGYD+huRhkslg,leC26UMFBk+RemxPwwu55x,,,N,0,0,,,2007-02-01 02:43,2007-02-04 01:05,hbe4678,hbe4678,,,0
4200,12460381,14517,6816220,13330,1,100,N,N,N,CP_Units,TT_Task,DT_FixedDUR2,RV_OK,TK_Complete,EK000I1220,Coriolis Meters - D/S,,,,0,0,0,0,120,0,0,0,,2005-09-23 00:00,2005-11-23 17:00,2007-04-15 08:01,2007-04-15 08:01,,2007-01-27 00:00,2007-01-27 00:00,,,2005-09-15 08:00,2005-10-05 17:00,,,,,PT_Normal,,,,,PzKRDAc+Rq6Xd1SFYKSB5Q,cfQfhijgmUOiKX/h0a9Xwh,,,N,0,0,,,2007-02-01 02:43,2007-02-04 01:05,hbe4678,hbe4678,,,0
4201,12460382,14517,6816220,13330,1,100,N,N,N,CP_Units,TT_Task,DT_FixedDUR2,RV_OK,TK_Complete,EK000I1221,Coriolis Meters - Purchase ERW,,,,0,0,0,0,40,0,0,0,,2006-02-01 00:00,2006-04-11 00:00,2009-02-15 08:01,2009-02-15 08:01,,2007-01-27 00:00,2007-01-27 00:00,,,2006-02-03 08:00,2006-02-09 17:00,,,,,PT_Normal,,,,,FfFyrC9vSui0/zSaS4ItAQ,leC26UMFBk+RemxPwwu55x,,,N,0,0,,,2007-02-01 02:43,2007-02-04 01:05,hbe4678,hbe4678,,,0
4202,12460383,14517,6816220,13330,1,100,N,N,N,CP_Units,TT_Task,DT_FixedDUR2,RV_OK,TK_Complete,EK02AIC300,02A In Line Instrument Approved Vendor Data,,,,0,0,0,0,160,0,0,0,,2006-02-01 00:00,2006-05-15 17:00,2007-05-27 08:01,2007-05-27 08:01,,2007-01-27 00:00,2007-01-27 00:00,,,2005-11-03 08:00,2005-11-30 17:00,,,,,PT_Normal,,,,,zVSOm/fRQ+SRG3fDCX39hQ,gArG5nAnUECC701VxWQz9w,,,N,0,0,,,2007-02-01 02:43,2007-02-04 01:05,hbe4678,hbe4678,,,0
4203,12460384,14517,6816220,13330,1,100,N,N,N,CP_Units,TT_Task,DT_FixedDUR2,RV_OK,TK_Complete,EK02BIC300,02B In Line Instrument Approved Vendor Data,,,,0,0,0,0,160,0,0,0,,2006-02-01 00:00,2006-04-04 00:00,2007-04-01 08:01,2007-04-01 08:01,,2007-01-27 00:00,2007-01-27 00:00,,,2005-11-03 08:00,2005-11-30 17:00,,,,,PT_Normal,,,,,zShpVhAMTZ26eUjiZFF6qw,sYXHF4CZTESfoazFIryrPw,,,N,0,0,,,2007-02-01 02:43,2007-02-04 01:05,hbe4678,hbe4678,,,0
4204,12460385,14517,6816220,13330,1,100,N,N,N,CP_Units,TT_Task,DT_FixedDUR2,RV_OK,TK_Complete,EK02CIC300,02C In Line Instrument Approved Vendor Data,,,,0,0,0,0,160,0,0,0,,2006-02-01 00:00,2006-06-21 00:00,2007-05-03 08:01,2007-05-03 08:01,,2007-01-27 00:00,2007-01-27 00:00,,,2005-11-03 08:00,2005-11-30 17:00,,,,,PT_Normal,,,,,L7Jzn9TgSOi32Az444RAAQ,sYXHF4CZTESfoazFIryrPw,,,N,0,0,,,2007-02-01 02:43,2007-02-04 01:05,hbe4678,hbe4678,,,0
4205,12460386,14517,6816220,13330,1,100,N,N,N,CP_Units,TT_Task,DT_FixedDUR2,RV_OK,TK_Complete,EK02DIC300,02D In Line Instrument Approved Vendor Data,,,,0,0,0,0,160,0,0,0,,2006-02-01 00:00,2006-05-15 17:00,2007-04-24 08:01,2007-04-24 08:01,,2007-01-27 00:00,2007-01-27 00:00,,,2005-11-03 08:00,2005-11-30 17:00,,,,,PT_Normal,,,,,w3ddksanSMeAm4c1oF5+BA,nfMHODcHDk6SMBtK12juxg,,,N,0,0,,,2007-02-01 02:43,2007-02-04 01:05,hbe4678,hbe4678,,,0
4206,12460387,14517,6816220,13330,1,100,N,N,N,CP_Units,TT_Task,DT_FixedDUR2,RV_OK,TK_Complete,EK02EIC300,02E In Line Instrument Approved Vendor Data,,,,0,0,0,0,160,0,0,0,,2006-02-01 00:00,2006-06-09 17:00,2007-04-15 08:01,2007-04-15 08:01,,2007-01-27 00:00,2007-01-27 00:00,,,2005-11-03 08:00,2005-11-30 17:00,,,,,PT_Normal,,,,,6173sWrpTxqRF3tvuU8W3g,sYXHF4CZTESfoazFIryrPw,,,N,0,0,,,2007-02-01 02:43,2007-02-04 01:05,hbe4678,hbe4678,,,0
4207,12460388,14517,6816220,13330,1,100,N,N,N,CP_Units,TT_Task,DT_FixedDUR2,RV_OK,TK_Complete,EK02FIC300,02F In Line Instrument Approved Vendor Data,,,,0,0,0,0,160,0,0,0,,2006-02-01 00:00,2006-06-06 17:00,2007-05-05 08:01,2007-05-05 08:01,,2007-01-27 00:00,2007-01-27 00:00,,,2005-11-03 08:00,2005-11-30 17:00,,,,,PT_Normal,,,,,HSOckLj9RYWcLd0P0RdiCg,nfMHODcHDk6SMBtK12juxg,,,N,0,0,,,2007-02-01 02:43,2007-02-04 01:05,hbe4678,hbe4678,,,0
4208,12460389,14517,6816220,13330,1,100,N,N,N,CP_Units,TT_Task,DT_FixedDUR2,RV_OK,TK_Complete,EK02GIC300,02G In Line Instrument Approved Vendor Data,,,,0,0,0,0,160,0,0,0,,2006-02-01 00:00,2006-06-29 00:00,2007-06-07 08:01,2007-06-07 08:01,,2007-01-27 00:00,2007-01-27 00:00,,,2005-11-03 08:00,2005-11-30 17:00,,,,,PT_Normal,,,,,4oifLkXGQcGZd439AsdsiA,0LxHRluJL0q8OkWcld+18A,,,N,0,0,,,2007-02-01 02:43,2007-02-04 01:05,hbe4678,hbe4678,,,0
4209,12460390,14517,6816220,13330,1,100,N,N,N,CP_Units,TT_Task,DT_FixedDUR2,RV_OK,TK_Complete,EK02HIC300,02H In Line Instrument Approved Vendor Data,,,,0,0,0,0,160,0,0,0,,2006-02-01 00:00,2006-06-19 00:00,2007-07-02 08:01,2007-07-02 08:01,,2007-01-27 00:00,2007-01-27 00:00,,,2005-11-03 08:00,2005-11-30 17:00,,,,,PT_Normal,,,,,EoZUiy7GSJ+TDounqVMM7Q,vYVytKp5x0+hhUKX6M1ZBg,,,N,0,0,,,2007-02-01 02:43,2007-02-04 01:05,hbe4678,hbe4678,,,0
4210,12460391,14517,6816220,13330,1,100,N,N,N,CP_Units,TT_Task,DT_FixedDUR2,RV_OK,TK_Complete,EK02JIC300,02J In Line Instrument Approved Vendor Data,,,,0,0,0,0,160,0,0,0,,2006-02-01 00:00,2006-06-29 00:00,2007-07-09 08:00,2007-07-09 08:00,,2007-01-27 00:00,2007-01-27 00:00,,,2005-11-03 08:00,2005-11-30 17:00,,,,,PT_Normal,,,,,ocxrQrQxRtunlb0SLQAKwQ,sYXHF4CZTESfoazFIryrPw,,,N,0,0,,,2007-02-01 02:43,2007-02-04 01:05,hbe4678,hbe4678,,,0
4211,12460392,14517,6816220,13330,1,100,N,N,N,CP_Units,TT_Task,DT_FixedDUR2,RV_OK,TK_Complete,EK02KIC300,02K In Line Instrument Approved Vendor Data,,,,0,0,0,0,160,0,0,0,,2006-02-01 00:00,2006-05-31 00:00,2007-06-18 08:00,2007-06-18 08:00,,2007-01-27 00:00,2007-01-27 00:00,,,2005-11-03 08:00,2005-11-30 17:00,,,,,PT_Normal,,,,,tqbtBk8NQlGeT0WholarpQ,nfMHODcHDk6SMBtK12juxg,,,N,0,0,,,2007-02-01 02:43,2007-02-04 01:05,hbe4678,hbe4678,,,0
4212,12460393,14517,6816220,13330,1,100,N,N,N,CP_Units,TT_Task,DT_FixedDUR2,RV_OK,TK_Complete,EK02LIC300,02L In Line Instrument Approved Vendor Data,,,,0,0,0,0,160,0,0,0,,2006-02-01 00:00,2006-06-20 00:00,2007-01-09 08:01,2007-01-09 08:01,,2007-01-27 00:00,2007-01-27 00:00,,,2005-11-03 08:00,2005-11-30 17:00,,,,,PT_Normal,,,,,xRCUvMlTR3mAtXpXQKggEA,0LxHRluJL0q8OkWcld+18A,,,N,0,0,,,2007-02-01 02:43,2007-02-04 01:05,hbe4678,hbe4678,,,0
4213,12460394,14517,6816220,13330,1,100,N,N,N,CP_Units,TT_Task,DT_FixedDUR2,RV_OK,TK_Complete,EK02MIC300,02M In Line Instrument Approved Vendor Data,,,,0,0,0,0,160,0,0,0,,2006-02-01 00:00,2006-07-19 17:00,2007-06-19 08:01,2007-06-19 08:01,,2007-01-27 00:00,2007-01-27 00:00,,,2005-11-03 08:00,2005-11-30 17:00,,,,,PT_Normal,,,,,ysYJHSHBR7a1aC5zKuKYNw,vYVytKp5x0+hhUKX6M1ZBg,,,N,0,0,,,2007-02-01 02:43,2007-02-04 01:05,hbe4678,hbe4678,,,0
4214,12460395,14517,6816220,13330,1,100,N,N,N,CP_Units,TT_Task,DT_FixedDUR2,RV_OK,TK_Complete,EK02NIC300,02N In Line Instrument Approved Vendor Data,,,,0,0,0,0,160,0,0,0,,2006-02-01 00:00,2006-06-16 00:00,2007-05-28 08:01,2007-05-28 08:01,,2007-01-27 00:00,2007-01-27 00:00,,,2005-11-03 08:00,2005-11-30 17:00,,,,,PT_Normal,,,,,LX7fBLGjT6W/q3OTGQkM0A,1yncPam00EiZRZDqRA7E7w,,,N,0,0,,,2007-02-01 02:43,2007-02-04 01:05,hbe4678,hbe4678,,,0
4215,12460396,14517,6816220,13330,1,100,N,N,N,CP_Units,TT_Task,DT_FixedDUR2,RV_OK,TK_Complete,EK02PIC300,02P In Line Instrument Approved Vendor Data,,,,0,0,0,0,160,0,0,0,,2006-02-01 00:00,2006-05-15 17:00,2007-05-03 08:01,2007-05-03 08:01,,2007-01-27 00:00,2007-01-27 00:00,,,2005-11-03 08:00,2005-11-30 17:00,,,,,PT_Normal,,,,,NMuicU+5Ty2xCbvOUifE0Q,QhGg7lCKwEa4ZQxu07d7Qg,,,N,0,0,,,2007-02-01 02:43,2007-02-04 01:05,hbe4678,hbe4678,,,0
4216,12460397,14517,6816220,13330,1,100,N,N,N,CP_Units,TT_Task,DT_FixedDUR2,RV_OK,TK_Complete,EK02QIC300,02Q In Line Instrument Approved Vendor Data,,,,0,0,0,0,160,0,0,0,,2006-02-01 00:00,2006-05-25 00:00,2007-05-26 08:01,2007-05-26 08:01,,2007-01-27 00:00,2007-01-27 00:00,,,2005-11-03 08:00,2005-11-30 17:00,,,,,PT_Normal,,,,,2akRhD0pStakkZd8SQn02Q,BR7kyJJg3EKRwOlczOoUjw,,,N,0,0,,,2007-02-01 02:43,2007-02-04 01:05,hbe4678,hbe4678,,,0
4217,12460398,14517,6816220,13330,1,100,N,N,N,CP_Units,TT_Task,DT_FixedDUR2,RV_OK,TK_Complete,EK02UIC300,02U In Line Instrument Approved Vendor Data,,,,0,0,0,0,160,0,0,0,,2006-02-01 00:00,2006-03-24 00:00,2006-12-25 08:00,2006-12-25 08:00,,2007-01-27 00:00,2007-01-27 00:00,,,2005-11-03 08:00,2005-11-30 17:00,,,,,PT_Normal,,,,,Orhynio1TDSzu4iGKOxmqA,sBa0VMo0A0moCCsokKavPw,,,N,0,0,,,2007-02-01 02:43,2007-02-04 01:05,hbe4678,hbe4678,,,0
4218,12460399,14517,6816220,13330,1,100,N,N,N,CP_Units,TT_Task,DT_FixedDUR2,RV_OK,TK_Complete,EK000I1122,020 Venturis - Purchase ERW,,,,0,0,0,0,40,0,0,0,,2006-05-01 08:00,2006-06-20 00:00,2009-01-09 08:00,2009-01-09 08:00,,2007-01-27 00:00,2007-01-27 00:00,,,2006-05-01 08:00,2006-05-05 17:00,,,,,PT_Normal,,,,,eQ2RfgKdTwaa0+OLWfYy5A,n8lmGXKB40mmWeKsonBJ0h,,,N,0,0,,,2007-02-01 02:43,2007-02-04 01:05,hbe4678,hbe4678,,,0
4219,12460400,14517,6816220,13330,1,100,N,N,N,CP_Units,TT_Task,DT_FixedDUR2,RV_OK,TK_Complete,EK000I1100,020 Orific Plates - D/S,,,,0,0,0,0,120,0,0,0,,2005-09-23 00:00,2005-10-14 17:00,2006-12-25 08:00,2006-12-25 08:00,,2007-01-27 00:00,2007-01-27 00:00,,,2005-09-15 08:00,2005-10-05 17:00,,,,,PT_Normal,,,,,i/DBOILkQjSEAIr0IYWc2w,2oqGWowGbUKYUArbZEZb2R,,,N,0,0,,,2007-02-01 02:43,2007-02-04 01:05,hbe4678,hbe4678,,,0
4220,12460401,14517,6816220,13330,1,100,N,N,N,CP_Units,TT_Task,DT_FixedDUR2,RV_OK,TK_Complete,EK000I1105,020 Orific Plates - Purchase ERW,,,,0,0,0,0,40,0,0,0,,2006-01-16 08:00,2006-01-26 17:00,2009-02-15 08:01,2009-02-15 08:01,,2007-01-27 00:00,2007-01-27 00:00,,,2006-01-16 08:00,2006-01-20 17:00,,,,,PT_Normal,,,,,h8f3/ALuRXGudKaCzWR4bA,n8lmGXKB40mmWeKsonBJ0h,,,N,0,0,,,2007-02-01 02:43,2007-02-04 01:05,hbe4678,hbe4678,,,0
4221,12460402,14517,6816220,13330,1,100,N,N,N,CP_Units,TT_Task,DT_FixedDUR2,RV_OK,TK_Complete,EK02CIC120,02C Instrument Detail Model / Review,,,,0,0,0,0,560,0,0,0,,2006-04-10 08:00,2006-06-29 00:00,2007-07-09 08:00,2007-07-09 08:00,,2007-01-27 00:00,2007-01-27 00:00,,,2006-04-10 08:00,2006-07-14 17:00,,,,,PT_Normal,,,,,uVC3FunVRKmia4a1C8PJxg,dn7KEpTMOUiBnBoR+qfcEx,,,N,0,0,,,2007-02-01 02:43,2007-02-04 01:05,hbe4678,hbe4678,,,0
4222,12460403,14517,6816220,13330,1,100,N,N,N,CP_Units,TT_Task,DT_FixedDUR2,RV_OK,TK_Complete,EK02HIC120,02H Instrument Detail Model / Review,,,,0,0,0,0,720,0,0,0,,2006-03-13 08:00,2006-07-19 17:00,2007-07-09 08:00,2007-07-09 08:00,,2007-01-27 00:00,2007-01-27 00:00,,,2006-03-13 08:00,2006-07-14 17:00,,,,,PT_Normal,,,,,OX1LZYn5RVKkrWhbju8Isg,GS9Gzk64B0aShuF2860lux,,,N,0,0,,,2007-02-01 02:43,2007-02-04 01:05,hbe4678,hbe4678,,,0
4223,12460404,14517,6816220,13330,1,100,N,N,N,CP_Units,TT_Task,DT_FixedDUR2,RV_OK,TK_Complete,EK000I612A,Develop / Issue Purchase ERW - Differential Pressure Gauges,,,,0,0,0,0,288,0,0,0,,2006-05-26 08:00,2006-07-27 17:00,2007-03-08 08:00,2007-03-08 08:00,,2007-01-27 00:00,2007-01-27 00:00,,,2006-05-26 08:00,2006-07-14 17:00,,,,,PT_Normal,,,,,VrpmO1htRkqEso8KhJTaDQ,MK3+EQghykarvjeRRAekeh,,,N,0,0,,,2007-02-01 02:43,2007-02-04 01:05,hbe4678,hbe4678,,,0
4224,12460405,14517,6816220,13330,1,100,N,N,N,CP_Units,TT_Task,DT_FixedDUR2,RV_OK,TK_Complete,EK000I621A,Develop / Issue Purchase ERW - Temperature Elements - ISBL,,,,0,0,0,0,288,0,0,0,,2006-05-08 08:00,2006-07-24 08:00,2007-03-13 08:00,2007-03-13 08:00,,2007-01-27 00:00,2007-01-27 00:00,,,2006-05-08 08:00,2006-06-26 17:00,,,,,PT_Normal,,,,,vWLczSKTS8GGWX1sleNf8g,MK3+EQghykarvjeRRAekeh,,,N,0,0,,,2007-02-01 02:43,2007-02-04 01:05,hbe4678,hbe4678,,,0
4225,12460406,14517,6816220,13330,1,100,N,N,N,CP_Units,TT_Task,DT_FixedDUR2,RV_OK,TK_Complete,EK000I611A,Develop / Issue Purchase ERW - Pressure Gauges - ISBL,,,,0,0,0,0,288,0,0,0,,2006-05-19 08:00,2006-08-09 00:00,2007-07-02 08:00,2007-07-02 08:00,,2007-01-27 00:00,2007-01-27 00:00,,,2006-05-19 08:00,2006-07-07 17:00,,,,,PT_Normal,,,,,j5poMDWcQImIzLhlfpD5qQ,MK3+EQghykarvjeRRAekeh,,,N,0,0,,,2007-02-01 02:43,2007-02-04 01:05,hbe4678,hbe4678,,,0
4226,12460407,14517,6816220,13330,1,100,N,N,N,CP_Units,TT_Task,DT_FixedDUR2,RV_OK,TK_Complete,EK000I617A,Develop / Issue Purchase ERW - Magnetic Lvl Gauges,,,,0,0,0,0,288,0,0,0,,2006-04-12 08:00,2006-06-05 17:00,2007-06-22 08:00,2007-06-22 08:00,,2007-01-27 00:00,2007-01-27 00:00,,,2006-04-12 08:00,2006-05-31 17:00,,,,,PT_Normal,,,,,R1xeMOqJTl6FzJo76rJrQw,MK3+EQghykarvjeRRAekeh,,,N,0,0,,,2007-02-01 02:43,2007-02-04 01:05,hbe4678,hbe4678,,,0
4227,12460408,14517,6816220,13330,1,100,N,N,N,CP_Units,TT_Task,DT_FixedDUR2,RV_OK,TK_Complete,EK000I623A,Develop / Issue Purchase ERW -Multi-Point Thermocouples - ISBL,,,,0,0,0,0,288,0,0,0,,2006-05-01 08:00,2006-06-26 17:00,2007-05-25 08:00,2007-05-25 08:00,,2007-01-27 00:00,2007-01-27 00:00,,,2006-05-01 08:00,2006-06-19 17:00,,,,,PT_Normal,,,,,fUMUURyOSO+etegxcKLLvg,MK3+EQghykarvjeRRAekeh,,,N,0,0,,,2007-02-01 02:43,2007-02-04 01:05,hbe4678,hbe4678,,,0
4228,12460409,14517,6816220,13330,1,100,N,N,N,CP_Units,TT_Task,DT_FixedDUR2,RV_OK,TK_Complete,EK000I616A,Develop / Issue Purchase ERW - Steam Drum Lvl Gauges - ISBL,,,,0,0,0,0,288,0,0,0,,2006-04-21 08:00,2006-06-12 17:00,2007-07-09 08:00,2007-07-09 08:00,,2007-01-27 00:00,2007-01-27 00:00,,,2006-04-21 08:00,2006-06-09 17:00,,,,,PT_Normal,,,,,GqE0vLc1QBu9ssvQDn+ZEg,MK3+EQghykarvjeRRAekeh,,,N,0,0,,,2007-02-01 02:43,2007-02-04 01:05,hbe4678,hbe4678,,,0
4229,12460410,14517,6816220,13330,1,100,N,N,N,CP_Units,TT_Task,DT_FixedDUR2,RV_OK,TK_Complete,EK000I2300,"On/Off Valves - D/S,Sizing,Tech Eval",,,,0,0,0,0,120,0,0,0,,2005-09-12 00:00,2005-12-15 17:00,2006-12-25 08:00,2006-12-25 08:00,,2007-01-27 00:00,2007-01-27 00:00,,,2005-10-05 08:00,2005-10-25 17:00,,,,,PT_Normal,,,,,GA1uE4QbQdOxUQWLl6XsTA,AASNRe29B0W+eq3S1YkgPx,,,N,0,0,,,2007-02-01 02:43,2007-02-04 01:05,hbe4678,hbe4678,,,0
4230,12460411,14517,6816220,13330,1,100,N,N,N,CP_Units,TT_Task,DT_FixedDUR2,RV_OK,TK_Complete,EK000I2305,On/Off Valves - Purchase ERW,,,,0,0,0,0,40,0,0,0,,2006-01-18 00:00,2006-06-20 00:00,2008-11-03 08:00,2008-11-03 08:00,,2007-01-27 00:00,2007-01-27 00:00,,,2006-01-31 08:00,2006-02-06 17:00,,,,,PT_Normal,,,,,HfoXbKv3Rpm0PlfMjogubA,Nuf5kKqelUCe5i+GfzGBaB,,,N,0,0,,,2007-02-01 02:43,2007-02-04 01:05,hbe4678,hbe4678,,,0
4231,12460412,14517,6816220,13330,1,100,N,N,N,CP_Units,TT_Task,DT_FixedDUR2,RV_OK,TK_Complete,EK000I1160,020 Wedge Flow Meters - D/S,,,,0,0,0,0,120,0,0,0,,2005-10-13 08:00,2005-12-16 00:00,2006-12-25 08:00,2006-12-25 08:00,,2007-01-27 00:00,2007-01-27 00:00,,,2005-10-13 08:00,2005-11-02 17:00,,,,,PT_Normal,,,,,o+t1A6qlRwa/k2st1QqSyA,2oqGWowGbUKYUArbZEZb2R,,,N,0,0,,,2007-02-01 02:43,2007-02-04 01:05,hbe4678,hbe4678,,,0
4232,12460413,14517,6816220,13330,1,100,N,N,N,CP_Units,TT_Task,DT_FixedDUR2,RV_OK,TK_Complete,EK000I1161,020 Wedge Flow Meters - Purchase ERW,,,,0,0,0,0,40,0,0,0,,2006-02-27 08:00,2006-04-05 00:00,2009-02-15 08:01,2009-02-15 08:01,,2007-01-27 00:00,2007-01-27 00:00,,,2006-02-27 08:00,2006-03-03 17:00,,,,,PT_Normal,,,,,XPo3AX+DRkuYhqN4Roaw/A,n8lmGXKB40mmWeKsonBJ0h,,,N,0,0,,,2007-02-01 02:43,2007-02-04 01:05,hbe4678,hbe4678,,,0
4233,12460414,14517,6816220,13330,1,100,N,N,N,CP_Units,TT_Task,DT_FixedDUR2,RV_OK,TK_Complete,EK000I1270,Magnetic Flow Meters D/S,,,,0,0,0,0,120,0,0,0,,2005-10-10 08:00,2005-12-02 00:00,2007-04-15 08:01,2007-04-15 08:01,,2007-01-27 00:00,2007-01-27 00:00,,,2005-10-10 08:00,2005-10-28 17:00,,,,,PT_Normal,,,,,bdZRmVmCRCOJSiaDvXmr9w,cfQfhijgmUOiKX/h0a9Xwh,,,N,0,0,,,2007-02-01 02:43,2007-02-04 01:05,hbe4678,hbe4678,,,0
4234,12460415,14517,6816220,13330,1,100,N,N,N,CP_Units,TT_Task,DT_FixedDUR2,RV_OK,TK_Complete,EK02LIC120,02L Instrument Detail Model / Review,,,,0,0,0,0,640,0,0,0,,2006-03-13 08:00,2006-06-22 00:00,2007-07-09 08:00,2007-07-09 08:00,,2007-01-27 00:00,2007-01-27 00:00,,,2006-03-13 08:00,2006-06-30 17:00,,,,,PT_Normal,,,,,4sTjrosLRJyzM+VhZWVdmQ,,,,N,0,0,,,2007-02-01 02:43,2007-02-04 01:05,hbe4678,hbe4678,,,0
4235,12460416,14517,6816220,13330,1,100,N,N,N,CP_Units,TT_Task,DT_FixedDUR2,RV_OK,TK_Complete,EK020I131A,Develop / Issue Purchase ERW -Transmitter ISBL,,,,0,0,0,0,296,0,0,0,,2006-04-03 08:00,2006-07-13 00:00,2007-05-15 08:00,2007-05-15 08:00,,2007-01-27 00:00,2007-01-27 00:00,,,2006-04-03 08:00,2006-05-23 17:00,,,,,PT_Normal,,,,,eL3epYzAT6iGLLxXCSeWAw,,,,N,0,0,,,2007-02-01 02:43,2007-02-04 01:05,hbe4678,hbe4678,,,0
4236,12460417,14517,6816220,13330,1,100,N,N,N,CP_Units,TT_Task,DT_FixedDUR2,RV_OK,TK_Complete,EK020IC210,"020 Control Valves - D/S,Sizing,Tech Eval",,,,0,0,0,0,120,0,0,0,,2005-09-15 00:00,2006-08-15 17:00,2006-12-25 08:00,2006-12-25 08:00,,2007-01-27 00:00,2007-01-27 00:00,,,2005-09-12 08:00,2005-09-30 17:00,,,,,PT_Normal,,,,,Mo6/hmxqSdKWJu7H0MmK2Q,,,,N,0,0,,,2007-02-01 02:43,2007-02-04 01:05,hbe4678,hbe4678,,,0
4237,12460418,14517,6816220,13330,1,100,N,N,N,CP_Units,TT_Task,DT_FixedDUR2,RV_OK,TK_Complete,EK020IC213,020 Control Valves - Purchase ERW,,,,0,0,0,0,40,0,0,0,,2006-02-17 00:00,2006-08-14 00:00,2009-02-15 08:01,2009-02-15 08:01,,2007-01-27 00:00,2007-01-27 00:00,,,2006-02-13 08:00,2006-02-17 17:00,,,,,PT_Normal,,,,,uSQIf/HpSw+qfC3S6kYjBQ,,,,N,0,0,,,2007-02-01 02:43,2007-02-04 01:05,hbe4678,hbe4678,,,0
4238,12460419,14517,6816220,13330,1,100,N,N,N,CP_Units,TT_Task,DT_FixedDUR2,RV_OK,TK_Complete,EK02AIC120,02A Instrument Detail Model / Review,,,,0,0,0,0,320,0,0,0,,2006-05-01 08:00,2006-05-25 00:00,2007-07-09 08:00,2007-07-09 08:00,,2007-01-27 00:00,2007-01-27 00:00,,,2006-05-01 08:00,2006-06-23 17:00,,,,,PT_Normal,,,,,EGQqqWKPQOyuK3vH5f8yQA,dn7KEpTMOUiBnBoR+qfcEx,,,N,0,0,,,2007-02-01 02:43,2007-02-04 01:05,hbe4678,hbe4678,,,0
4239,12460420,14517,6816220,13330,1,100,N,N,N,CP_Units,TT_Task,DT_FixedDUR2,RV_OK,TK_Complete,EK02BIC120,02B Instrument Detail Model / Review,,,,0,0,0,0,200,0,0,0,,2006-03-14 08:00,2006-04-12 00:00,2007-07-09 08:00,2007-07-09 08:00,,2007-01-27 00:00,2007-01-27 00:00,,,2006-03-14 08:00,2006-04-17 17:00,,,,,PT_Normal,,,,,CsS1/qjRSKqC/vsfLovIbA,J5FvJL1yq0eeh5Oz3AymCR,,,N,0,0,,,2007-02-01 02:43,2007-02-04 01:05,hbe4678,hbe4678,,,0
4240,12460421,14517,6816220,13330,1,100,N,N,N,CP_Units,TT_Task,DT_FixedDUR2,RV_OK,TK_Complete,EK02DIC120,02D Instrument Detail Model / Review,,,,0,0,0,0,520,0,0,0,,2006-03-13 08:00,2006-05-18 17:00,2007-07-09 08:00,2007-07-09 08:00,,2007-01-27 00:00,2007-01-27 00:00,,,2006-03-13 08:00,2006-06-09 17:00,,,,,PT_Normal,,,,,+4Ejsf2aR7e4b3Mpvb26dA,Oi6X5IfUHUGYGBkqRu1CUR,,,N,0,0,,,2007-02-01 02:43,2007-02-04 01:05,hbe4678,hbe4678,,,0
4241,12460422,14517,6816220,13330,1,100,N,N,N,CP_Units,TT_Task,DT_FixedDUR2,RV_OK,TK_Complete,EK02EIC120,02E Instrument Detail Model / Review,,,,0,0,0,0,360,0,0,0,,2006-03-13 08:00,2006-06-21 17:00,2007-07-09 08:00,2007-07-09 08:00,,2007-01-27 00:00,2007-01-27 00:00,,,2006-03-13 08:00,2006-05-12 17:00,,,,,PT_Normal,,,,,9I3gLPA7TeeLTDH8xNeQBg,Yi1od/A1bkWkvv/mOOLo0B,,,N,0,0,,,2007-02-01 02:43,2007-02-04 01:05,hbe4678,hbe4678,,,0
4242,12460423,14517,6816220,13330,1,100,N,N,N,CP_Units,TT_Task,DT_FixedDUR2,RV_OK,TK_Complete,EK02FIC120,02F Instrument Detail Model / Review,,,,0,0,0,0,280,0,0,0,,2006-05-22 08:00,2006-06-22 17:00,2007-07-09 08:00,2007-07-09 08:00,,2007-01-27 00:00,2007-01-27 00:00,,,2006-05-22 08:00,2006-07-07 17:00,,,,,PT_Normal,,,,,/JUMfv2tS1WFQabadbdQEw,+pXVQM1dAkekVD76gqfy9B,,,N,0,0,,,2007-02-01 02:43,2007-02-04 01:05,hbe4678,hbe4678,,,0
4243,12460424,14517,6816220,13330,1,100,N,N,N,CP_Units,TT_Task,DT_FixedDUR2,RV_OK,TK_Complete,EK02GIC120,02G Instrument Detail Model / Review,,,,0,0,0,0,480,0,0,0,,2006-05-23 08:00,2006-06-29 00:00,2007-07-09 08:00,2007-07-09 08:00,,2007-01-27 00:00,2007-01-27 00:00,,,2006-05-23 08:00,2006-08-14 17:00,,,,,PT_Normal,,,,,CPnZjZTCTSmWDgxfjfuVqg,k8ma/0aw6UaZTUNSI+u8Ah,,,N,0,0,,,2007-02-01 02:43,2007-02-04 01:05,hbe4678,hbe4678,,,0
4244,12460425,14517,6816220,13330,1,100,N,N,N,CP_Units,TT_Task,DT_FixedDUR2,RV_OK,TK_Complete,EK02JIC120,02J Instrument Detail Model / Review,,,,0,0,0,0,760,0,0,0,,2006-03-13 08:00,2006-06-19 00:00,2007-07-09 08:00,2007-07-09 08:00,,2007-01-27 00:00,2007-01-27 00:00,,,2006-03-13 08:00,2006-07-21 17:00,,,,,PT_Normal,,,,,Aafg8RcJRvG0hvwTLjLHfQ,XkKUGwnWS0WeR5Sf38kL7x,,,N,0,0,,,2007-02-01 02:43,2007-02-04 01:05,hbe4678,hbe4678,,,0
4245,12460426,14517,6816220,13330,1,100,N,N,N,CP_Units,TT_Task,DT_FixedDUR2,RV_OK,TK_Complete,EK02KIC120,02K Instrument Detail Model / Review,,,,0,0,0,0,536,0,0,0,,2006-03-13 08:00,2006-06-19 00:00,2007-07-09 08:00,2007-07-09 08:00,,2007-01-27 00:00,2007-01-27 00:00,,,2006-03-13 08:00,2006-06-13 17:00,,,,,PT_Normal,,,,,GUtf706ATPmelqGBbAsvgQ,6xBBAG16wUiHfDmTIYlZ/x,,,N,0,0,,,2007-02-01 02:43,2007-02-04 01:05,hbe4678,hbe4678,,,0
4246,12460427,14517,6816220,13330,1,100,N,N,N,CP_Units,TT_Task,DT_FixedDUR2,RV_OK,TK_Complete,EK02MIC120,02M Instrument Detail Model / Review,,,,0,0,0,0,640,0,0,0,,2006-03-13 08:00,2006-06-29 17:00,2007-07-09 08:00,2007-07-09 08:00,,2007-01-27 00:00,2007-01-27 00:00,,,2006-03-13 08:00,2006-06-30 17:00,,,,,PT_Normal,,,,,FGP4rdvBSRO+MMFGXX2/fQ,XSzAQeTTs0iNDJVYAowO1B,,,N,0,0,,,2007-02-01 02:43,2007-02-04 01:05,hbe4678,hbe4678,,,0
4247,12460428,14517,6816220,13330,1,100,N,N,N,CP_Units,TT_Task,DT_FixedDUR2,RV_OK,TK_Complete,EK02NIC120,02N Instrument Detail Model / Review,,,,0,0,0,0,280,0,0,0,,2006-03-27 08:00,2006-05-15 00:00,2007-07-09 08:00,2007-07-09 08:00,,2007-01-27 00:00,2007-01-27 00:00,,,2006-03-27 08:00,2006-05-12 17:00,,,,,PT_Normal,,,,,a18jdlPYQd2AnUU4nM3stw,vfydG5qPiUCv9xBBDYwCvR,,,N,0,0,,,2007-02-01 02:43,2007-02-04 01:05,hbe4678,hbe4678,,,0
4248,12460429,14517,6816220,13330,1,100,N,N,N,CP_Units,TT_Task,DT_FixedDUR2,RV_OK,TK_Complete,EK02PIC120,02P Instrument Detail Model / Review,,,,0,0,0,0,200,0,0,0,,2006-03-15 08:00,2006-04-20 00:00,2007-07-09 08:00,2007-07-09 08:00,,2007-01-27 00:00,2007-01-27 00:00,,,2006-03-15 08:00,2006-04-18 17:00,,,,,PT_Normal,,,,,CH/iSW2DT+iZKYcrq5SRDA,8IyoM/g+9E2RmWpkT4RCfR,,,N,0,0,,,2007-02-01 02:43,2007-02-04 01:05,hbe4678,hbe4678,,,0
4249,12460430,14517,6816220,13330,1,100,N,N,N,CP_Units,TT_Task,DT_FixedDUR2,RV_OK,TK_Complete,EK02QIC120,02Q Instrument Detail Model / Review,,,,0,0,0,0,240,0,0,0,,2006-03-13 08:00,2006-06-21 17:00,2007-07-09 08:00,2007-07-09 08:00,,2007-01-27 00:00,2007-01-27 00:00,,,2006-03-13 08:00,2006-04-21 17:00,,,,,PT_Normal,,,,,/ALPEa24SSaH0BJIOChcsA,9U10Wl7Y+kKZQWhFO8wSmB,,,N,0,0,,,2007-02-01 02:43,2007-02-04 01:05,hbe4678,hbe4678,,,0
4250,12460431,14517,6816220,13330,1,100,N,N,N,CP_Units,TT_Task,DT_FixedDUR2,RV_OK,TK_Complete,EK02YIC120,02Y Instrument Detail Model / Review,,,,0,0,0,0,280,0,0,0,,2006-04-10 08:00,2006-05-17 00:00,2007-07-09 08:00,2007-07-09 08:00,,2007-01-27 00:00,2007-01-27 00:00,,,2006-04-10 08:00,2006-05-26 17:00,,,,,PT_Normal,,,,,Mcti2cDeSOWRd8LjB6rDGQ,UIASm48HHkqal9qRSV/8BR,,,N,0,0,,,2007-02-01 02:43,2007-02-04 01:05,hbe4678,hbe4678,,,0
4251,12460432,14517,6816220,13330,1,100,N,N,N,CP_Units,TT_Task,DT_FixedDUR2,RV_OK,TK_Complete,EK000I1121,020 Venturis - D/S,,,,0,0,0,0,120,0,0,0,,2005-09-26 08:00,2005-10-14 17:00,2006-12-25 08:00,2006-12-25 08:00,,2007-01-27 00:00,2007-01-27 00:00,,,2005-09-26 08:00,2005-10-14 17:00,,,,,PT_Normal,,,,,vaQb+adMR8OjPENFUo+Z3g,2oqGWowGbUKYUArbZEZb2R,,,N,0,0,,,2007-02-01 02:43,2007-02-04 01:05,hbe4678,hbe4678,,,0
4252,12460433,14517,6816221,4047,1,100,N,N,N,CP_Drtn,TT_Task,DT_FixedDUR2,RV_OK,TK_Complete,PK02HMB35,02H MB621  101-B I.D. & F.D. Fans - Piping Prod. V. Data,,,,0,0,0,0,280,0,0,0,,2006-01-16 08:00,2006-02-08 00:00,2007-07-02 08:01,2007-07-02 08:01,,2007-01-27 00:00,2007-01-27 00:00,,,2006-01-16 08:00,2006-03-03 17:00,,,,,PT_Normal,,,,,xiFw+vWYSpeUieTQtoPcPA,E+VV42zFk0CJdg2MFBvNHA,,,N,0,0,,,2007-02-01 02:43,2007-02-04 01:05,hbe4678,hbe4678,,,0
4253,12460434,14517,6816221,4047,1,100,N,N,N,CP_Drtn,TT_Task,DT_FixedDUR2,RV_OK,TK_Complete,PK02HMB36,02H MB621  101-B I.D. & F.D. Fans - Civil Prod. V. Data,,,,0,0,0,0,280,0,0,0,,2006-01-16 08:00,2006-02-08 00:00,2007-06-07 08:01,2007-06-07 08:01,,2007-01-27 00:00,2007-01-27 00:00,,,2006-01-16 08:00,2006-03-03 17:00,,,,,PT_Normal,,,,,ofaMORvbSoG99m+/OrX0yQ,E+VV42zFk0CJdg2MFBvNHA,,,N,0,0,,,2007-02-01 02:43,2007-02-04 01:05,hbe4678,hbe4678,,,0
4254,12460435,14517,6816221,4047,1,100,N,N,N,CP_Drtn,TT_Task,DT_FixedDUR2,RV_OK,TK_Complete,PK02HMB37,02H MB621  101-B I.D. & F.D. Fans - E&I Prod. V. Data,,,,0,0,0,0,280,0,0,0,,2006-01-16 08:00,2006-02-08 00:00,2007-09-19 08:01,2007-09-19 08:01,,2007-01-27 00:00,2007-01-27 00:00,,,2006-01-16 08:00,2006-03-03 17:00,,,,,PT_Normal,,,,,gd/rHK1gRuezAalDIlaCAA,E+VV42zFk0CJdg2MFBvNHA,,,N,0,0,,,2007-02-01 02:43,2007-02-04 01:05,hbe4678,hbe4678,,,0
4255,12460436,14517,6816221,4047,1,100,N,N,N,CP_Drtn,TT_Task,DT_FixedDUR2,RV_OK,TK_Complete,PK02HMB38,02H MB622  101-B - Piping Prod. V. Data,,,,0,0,0,0,280,0,0,0,,2006-02-06 00:00,2006-06-15 00:00,2007-07-02 08:01,2007-07-02 08:01,,2007-01-27 00:00,2007-01-27 00:00,,,2006-01-30 08:00,2006-03-17 17:00,,,,,PT_Normal,,,,,JA2p1uQ0SZqNbrrBx+HCVQ,4mgU8Lfq/kK1DiJkbjC/Kg,,,N,0,0,,,2007-02-01 02:43,2007-02-04 01:05,hbe4678,hbe4678,,,0
4256,12460437,14517,6816221,4047,1,100,N,N,N,CP_Drtn,TT_Task,DT_FixedDUR2,RV_OK,TK_Complete,PK02HMB39,02H MB622  101-B - Civil Prod. V. Data,,,,0,0,0,0,280,0,0,0,,2006-02-06 00:00,2006-07-07 00:00,2007-06-07 08:01,2007-06-07 08:01,,2007-01-27 00:00,2007-01-27 00:00,,,2006-01-30 08:00,2006-03-17 17:00,,,,,PT_Normal,,,,,FqPYnho7TvOqR1Jpb+p3wQ,4mgU8Lfq/kK1DiJkbjC/Kg,,,N,0,0,,,2007-02-01 02:43,2007-02-04 01:05,hbe4678,hbe4678,,,0
4257,12460438,14517,6816221,4047,1,100,N,N,N,CP_Drtn,TT_Task,DT_FixedDUR2,RV_OK,TK_Complete,PK02HMB40,02H MB622  101-B - E&I Prod. V. Data,,,,0,0,0,0,280,0,0,0,,2006-02-06 00:00,2006-07-07 00:00,2009-02-13 17:00,2009-02-13 17:00,,2007-01-27 00:00,2007-01-27 00:00,,,2006-01-30 08:00,2006-03-17 17:00,,,,,PT_Normal,,,,,NuUMQDRyQaG/h+IfcSmw9Q,4mgU8Lfq/kK1DiJkbjC/Kg,,,N,0,0,,,2007-02-01 02:43,2007-02-04 01:05,hbe4678,hbe4678,,,0
4258,12460439,14517,6816221,4047,1,100,N,N,N,CP_Drtn,TT_Task,DT_FixedDUR2,RV_OK,TK_Complete,PK02HMB41,02H MB630  101-BL1 Combustion Air Preheater - Piping Prod. V. Data,,,,0,0,0,0,280,0,0,0,,2006-01-30 08:00,2006-01-30 17:00,2007-07-02 08:01,2007-07-02 08:01,,2007-01-27 00:00,2007-01-27 00:00,,,2006-01-30 08:00,2006-03-17 17:00,,,,,PT_Normal,,,,,sQu0LjDKS6uRNJVQ1No9BQ,GalXCtTN+USJ6gBMUceS7A,,,N,0,0,,,2007-02-01 02:43,2007-02-04 01:05,hbe4678,hbe4678,,,0
4259,12460440,14517,6816221,4047,1,100,N,N,N,CP_Drtn,TT_Task,DT_FixedDUR2,RV_OK,TK_Complete,PK02HMB42,02H MB630  101-BL1 Combustion Air Preheater - Civil Prod. V. Data,,,,0,0,0,0,280,0,0,0,,2006-01-30 08:00,2006-01-30 17:00,2007-06-07 08:01,2007-06-07 08:01,,2007-01-27 00:00,2007-01-27 00:00,,,2006-01-30 08:00,2006-03-17 17:00,,,,,PT_Normal,,,,,eEi+dbn3SeO6m95xrMH6nQ,GalXCtTN+USJ6gBMUceS7A,,,N,0,0,,,2007-02-01 02:43,2007-02-04 01:05,hbe4678,hbe4678,,,0
4260,12460441,14517,6816221,4047,1,100,N,N,N,CP_Drtn,TT_Task,DT_FixedDUR2,RV_OK,TK_Complete,PK02HMB43,02H MB630  101-BL1 Combustion Air Preheater - E&I Prod. V. Data,,,,0,0,0,0,280,0,0,0,,2006-01-30 08:00,2006-01-30 17:00,2009-02-13 17:00,2009-02-13 17:00,,2007-01-27 00:00,2007-01-27 00:00,,,2006-01-30 08:00,2006-03-17 17:00,,,,,PT_Normal,,,,,+1zjkPHfRKKNVoFKGLHQcA,GalXCtTN+USJ6gBMUceS7A,,,N,0,0,,,2007-02-01 02:43,2007-02-04 01:05,hbe4678,hbe4678,,,0
4261,12460442,14517,6816221,4047,1,100,N,N,N,CP_Drtn,TT_Task,DT_FixedDUR2,RV_OK,TK_Complete,PK02HMB50,02H MB692  101-BL2 - Piping Prod. V. Data,,,,0,0,0,0,280,0,0,0,,2006-05-01 08:00,2006-06-26 17:00,2007-07-02 08:01,2007-07-02 08:01,,2007-01-27 00:00,2007-01-27 00:00,,,2006-05-01 08:00,2006-06-16 17:00,,,,,PT_Normal,,,,,nvH3uDYFQBKGqqXueX1yfQ,Q5W0GnMCdUuAFV3MJxrV1g,,,N,0,0,,,2007-02-01 02:43,2007-02-04 01:05,hbe4678,hbe4678,,,0
4262,12460443,14517,6816221,4047,1,100,N,N,N,CP_Drtn,TT_Task,DT_FixedDUR2,RV_OK,TK_Complete,PK02HMB51,02H MB692  101-BL2 - Civil Prod. V. Data,,,,0,0,0,0,280,0,0,0,,2006-05-01 08:00,2006-06-26 17:00,2007-06-07 08:01,2007-06-07 08:01,,2007-01-27 00:00,2007-01-27 00:00,,,2006-05-01 08:00,2006-06-16 17:00,,,,,PT_Normal,,,,,Vw/f5giaRW2jUh9IZurCeA,Q5W0GnMCdUuAFV3MJxrV1g,,,N,0,0,,,2007-02-01 02:43,2007-02-04 01:05,hbe4678,hbe4678,,,0
4263,12460444,14517,6816221,4047,1,100,N,N,N,CP_Drtn,TT_Task,DT_FixedDUR2,RV_OK,TK_Complete,PK02HMB52,02H MB692  101-BL2 - E&I Prod. V. Data,,,,0,0,0,0,280,0,0,0,,2006-05-01 08:00,2006-06-26 17:00,2009-02-13 17:00,2009-02-13 17:00,,2007-01-27 00:00,2007-01-27 00:00,,,2006-05-01 08:00,2006-06-16 17:00,,,,,PT_Normal,,,,,kkrsodXAThGYfVe+8AUTcA,Q5W0GnMCdUuAFV3MJxrV1g,,,N,0,0,,,2007-02-01 02:43,2007-02-04 01:05,hbe4678,hbe4678,,,0
4264,12460445,14517,6816221,4047,1,100,N,N,N,CP_Drtn,TT_Task,DT_FixedDUR2,RV_OK,TK_Complete,PK02MMB02,02M MB810  102-B - Piping Prod. V. Data,,,,0,0,0,0,280,0,0,0,,2005-11-10 00:00,2006-01-10 00:00,2007-06-19 08:01,2007-06-19 08:01,,2007-01-27 00:00,2007-01-27 00:00,,,2006-01-30 08:00,2006-03-17 17:00,,,,,PT_Normal,,,,,c/0Ze9TvR6uwxEysJRe+rQ,grZLuY/vFk6Ub9KZ4M12eA,,,N,0,0,,,2007-02-01 02:43,2007-02-04 01:05,hbe4678,hbe4678,,,0
4265,12460446,14517,6816221,4047,1,100,N,N,N,CP_Drtn,TT_Task,DT_FixedDUR2,RV_OK,TK_Complete,PK02MMB03,02M MB810  102-B - Civil Prod. V. Data,,,,0,0,0,0,280,0,0,0,,2005-11-10 00:00,2006-01-10 00:00,2007-09-04 08:01,2007-09-04 08:01,,2007-01-27 00:00,2007-01-27 00:00,,,2006-01-30 08:00,2006-03-17 17:00,,,,,PT_Normal,,,,,E45vgyyPSySf4DJblNU6RA,grZLuY/vFk6Ub9KZ4M12eA,,,N,0,0,,,2007-02-01 02:43,2007-02-04 01:05,hbe4678,hbe4678,,,0
4266,12460447,14517,6816221,4047,1,100,N,N,N,CP_Drtn,TT_Task,DT_FixedDUR2,RV_OK,TK_Complete,PK02MMB04,02M MB810  102-B - E&I Prod. V. Data,,,,0,0,0,0,280,0,0,0,,2005-11-10 00:00,2006-01-10 00:00,2009-02-13 17:00,2009-02-13 17:00,,2007-01-27 00:00,2007-01-27 00:00,,,2006-01-30 08:00,2006-03-17 17:00,,,,,PT_Normal,,,,,droo3f+oQWWWAWhfYYBL2g,grZLuY/vFk6Ub9KZ4M12eA,,,N,0,0,,,2007-02-01 02:43,2007-02-04 01:05,hbe4678,hbe4678,,,0
4267,12460448,14517,6816221,13330,1,100,N,N,N,CP_Units,TT_Task,DT_FixedDUR2,RV_OK,TK_Complete,EK000MB81F,Prepare & Issue Purchase ERW - MB810,,,,0,0,0,0,160,0,0,0,,2005-04-22 08:00,2005-06-24 00:00,2007-06-19 08:01,2007-06-19 08:01,,2007-01-27 00:00,2007-01-27 00:00,,,2005-04-22 08:00,2005-05-19 17:00,,,,,PT_Normal,,,,,hp1UvH9jRtKUhMiTkoAxrw,,,,N,0,0,,,2007-02-01 02:43,2007-02-04 01:05,hbe4678,hbe4678,,,0
4268,12460449,14517,6816221,13330,1,100,N,N,N,CP_Units,TT_Task,DT_FixedDUR2,RV_OK,TK_Complete,EK000MB81C,Prepare & Issue Prelim. RFQ - MB810 to Proc.,,,,0,,0,,24,,,0,,2005-03-23 08:00,2005-03-25 17:00,2007-06-19 08:01,2007-06-19 08:01,,2007-01-27 00:00,2007-01-27 00:00,,,2005-03-23 08:00,2005-03-25 17:00,,,,,PT_Normal,,,,,eTL+lgaySnqd8yBdJdPZBA,,,,N,,,,,2007-02-01 02:43,2007-02-04 01:05,hbe4678,hbe4678,,,0
4269,12460450,14517,6816221,13330,1,100,N,N,N,CP_Units,TT_Task,DT_FixedDUR2,RV_OK,TK_Complete,EK000MB81D,Technical Evaluation  - MB810,,,,0,0,0,0,40,0,0,0,,2005-04-28 08:00,2005-05-04 17:00,2007-06-19 08:01,2007-06-19 08:01,,2007-01-27 00:00,2007-01-27 00:00,,,2005-04-28 08:00,2005-05-04 17:00,,,,,PT_Normal,,,,,Ln9zgOAVS2a8W8RnW5sDJA,,,,N,0,0,,,2007-02-01 02:43,2007-02-04 01:05,hbe4678,hbe4678,,,0
4270,12460451,14517,6816221,13330,1,100,N,N,N,CP_Units,TT_Task,DT_FixedDUR2,RV_OK,TK_Complete,EK000MB015,101-B API Furnace Data Sheets,,,,0,0,0,0,80,0,0,0,,2005-04-08 08:00,2005-04-21 17:00,2007-02-07 08:01,2007-02-07 08:01,,2007-01-27 00:00,2007-01-27 00:00,,,2005-04-08 08:00,2005-04-21 17:00,,,,,PT_Normal,,,,,nur51m4IRkKyesWiBVMBrA,,,,N,0,0,,,2007-02-01 02:43,2007-02-04 01:05,hbe4678,hbe4678,,,0
4271,12460452,14517,6816221,13330,1,100,N,N,N,CP_Units,TT_Task,DT_FixedDUR2,RV_OK,TK_Complete,EK000MB020,Burner Data Sheets,,,,0,0,0,0,80,0,0,0,,2005-04-18 00:00,2005-04-21 00:00,2007-02-07 08:01,2007-02-07 08:01,,2007-01-27 00:00,2007-01-27 00:00,,,2005-05-20 08:00,2005-06-03 17:00,,,,,PT_Normal,,,,,q5cBJXpFTqSBHdV6PibPxA,,,,N,0,0,,,2007-02-01 02:43,2007-02-04 01:05,hbe4678,hbe4678,,,0
4272,12460453,14517,6816221,13330,1,100,N,N,N,CP_Units,TT_Task,DT_FixedDUR2,RV_OK,TK_Complete,EK000MB025,Air Preheater data sheets,,,,0,0,0,0,80,0,0,0,,2005-04-11 00:00,2005-04-21 00:00,2007-02-07 08:01,2007-02-07 08:01,,2007-01-27 00:00,2007-01-27 00:00,,,2005-05-27 08:00,2005-06-10 17:00,,,,,PT_Normal,,,,,9S4vMV4VQG+1MKFCRu8kgg,,,,N,0,0,,,2007-02-01 02:43,2007-02-04 01:05,hbe4678,hbe4678,,,0
4273,12460454,14517,6816221,13330,1,100,N,N,N,CP_Units,TT_Task,DT_FixedDUR2,RV_OK,TK_Complete,EK000MB030,ID & FD fan data sheets,,,,0,0,0,0,80,0,0,0,,2005-05-02 00:00,2005-05-13 00:00,2007-03-07 08:01,2007-03-07 08:01,,2007-01-27 00:00,2007-01-27 00:00,,,2005-06-07 08:00,2005-06-20 17:00,,,,,PT_Normal,,,,,lFm8vPAkSiGIeWmj0dLNeA,,,,N,0,0,,,2007-02-01 02:43,2007-02-04 01:05,hbe4678,hbe4678,,,0
4274,12460455,14517,6816221,13330,1,100,N,N,N,CP_Units,TT_Task,DT_FixedDUR2,RV_OK,TK_Complete,EK000MB035,101-B Damper & Expansion joint data sheets,,,,0,0,0,0,88,0,0,0,,2005-05-31 00:00,2005-06-24 00:00,2007-06-07 08:01,2007-06-07 08:01,,2007-01-27 00:00,2007-01-27 00:00,,,2005-06-13 08:00,2005-06-27 17:00,,,,,PT_Normal,,,,,NkuK3pgvRqWdzMX7BVR+8w,,,,N,0,0,,,2007-02-01 02:43,2007-02-04 01:05,hbe4678,hbe4678,,,0
4275,12460456,14517,6816221,13330,1,100,N,N,N,CP_Units,TT_Task,DT_FixedDUR2,RV_OK,TK_Complete,EK000MB040,Penthouse fan data sheets,,,,0,0,0,0,40,0,0,0,,2005-05-31 00:00,2005-06-24 17:00,2007-06-07 08:01,2007-06-07 08:01,,2007-01-27 00:00,2007-01-27 00:00,,,2005-06-28 08:00,2005-07-06 17:00,,,,,PT_Normal,,,,,42dLOmWESkSMttfgaP4tFw,,,,N,0,0,,,2007-02-01 02:43,2007-02-04 01:05,hbe4678,hbe4678,,,0
4276,12460457,14517,6816221,13330,1,100,N,N,N,CP_Units,TT_Task,DT_FixedDUR2,RV_OK,TK_Complete,EK000MB065,102-B Start-up Heater Prelim Data Sheets & ERW,,,,0,,0,,160,,,0,,2005-03-21 08:00,2005-03-25 17:00,2007-06-19 08:01,2007-06-19 08:01,,2007-01-27 00:00,2007-01-27 00:00,,,2005-03-21 08:00,2005-04-15 17:00,,,,,PT_Normal,,,,,LNM3fvlyTzW+7w7AbH4w8g,,,,N,,,,,2007-02-01 02:43,2007-02-04 01:05,hbe4678,hbe4678,,,0
4277,12460458,14517,6816221,13330,1,100,N,N,N,CP_Units,TT_Task,DT_FixedDUR2,RV_OK,TK_Complete,EK000MB33B,101-B Develop & Issue Design Data,,,,0,,0,,160,,,0,,2005-03-21 08:00,2005-04-12 17:00,2007-02-07 08:01,2007-02-07 08:01,,2007-01-27 00:00,2007-01-27 00:00,,,2005-03-21 08:00,2005-04-15 17:00,,,,,PT_Normal,,,,,7IvCtXaXTwOZC18oAinjag,,,,N,,,,,2007-02-01 02:43,2007-02-04 01:05,hbe4678,hbe4678,,,0
4278,12460459,14517,6816221,13330,1,100,N,N,N,CP_Units,TT_Task,DT_FixedDUR2,RV_OK,TK_Complete,PK000MB81N,02M MB810  102-B Startup Heater Planning V. Data,,,,0,0,0,0,160,0,0,0,,2005-09-12 00:00,2005-11-09 00:00,2007-06-19 08:01,2007-06-19 08:01,,2007-01-27 00:00,2007-01-27 00:00,,,2005-10-17 08:00,2005-11-11 17:00,,,,,PT_Normal,,,,,kgu25YbtShSeG6q0eDECEg,,,,N,0,0,,,2007-02-01 02:43,2007-02-04 01:05,hbe4678,hbe4678,,,0
4279,12460460,14517,6816221,13330,1,100,N,N,N,CP_Units,TT_Task,DT_FixedDUR2,RV_OK,TK_Complete,PK000MB62N,Recv. Planning V. Data MB621,,,,0,0,0,0,160,0,0,0,,2005-09-12 00:00,2006-01-16 08:00,2007-03-07 08:01,2007-03-07 08:01,,2007-01-27 00:00,2007-01-27 00:00,,,2005-10-17 08:00,2005-11-11 17:00,,,,,PT_Normal,,,,,2eVv9FGBRKuiM+9odfxPvA,,,,N,0,0,,,2007-02-01 02:43,2007-02-04 01:05,hbe4678,hbe4678,,,0
4280,12460461,14517,6816221,13330,1,100,N,N,N,CP_Units,TT_Task,DT_FixedDUR2,RV_OK,TK_Complete,PK000MB63N,Recv. Planning V. Data MB630,,,,0,0,0,0,160,0,0,0,,2005-09-12 00:00,2005-10-28 00:00,2007-09-19 08:01,2007-09-19 08:01,,2007-01-27 00:00,2007-01-27 00:00,,,2005-10-17 08:00,2005-11-11 17:00,,,,,PT_Normal,,,,,fa05yn0NQPOCrsxdNMbang,,,,N,0,0,,,2007-02-01 02:43,2007-02-04 01:05,hbe4678,hbe4678,,,0
4281,12460462,14517,6816221,13330,1,100,N,N,N,CP_Units,TT_Task,DT_FixedDUR2,RV_OK,TK_Complete,PK000MB61N,Recv. Planning V. Data MB610,,,,0,0,0,0,160,0,0,0,,2005-09-12 00:00,2005-10-31 17:00,2007-09-19 08:01,2007-09-19 08:01,,2007-01-27 00:00,2007-01-27 00:00,,,2005-10-17 08:00,2005-11-11 17:00,,,,,PT_Normal,,,,,N/39tncwTce1KKFQbEoREg,,,,N,0,0,,,2007-02-01 02:43,2007-02-04 01:05,hbe4678,hbe4678,,,0
4282,12460463,14517,6816221,13330,1,100,N,N,N,CP_Units,TT_Task,DT_FixedDUR2,RV_OK,TK_Complete,PK000MB21N,Recv. Planning V. Data MB212,,,,0,0,0,0,160,0,0,0,,2005-12-08 00:00,2006-01-09 00:00,2007-07-02 08:01,2007-07-02 08:01,,2007-01-27 00:00,2007-01-27 00:00,,,2006-02-06 08:00,2006-03-03 17:00,,,,,PT_Normal,,,,,u7YEkI3eSl2RvBmkQQ9lSA,,,,N,0,0,,,2007-02-01 02:43,2007-02-04 01:05,hbe4678,hbe4678,,,0
4283,12460464,14517,6816221,4047,1,100,N,N,N,CP_Drtn,TT_Task,DT_FixedDUR2,RV_OK,TK_Complete,PK02HMB19,02H MB221  101-B - Piping Prod. V. Data,,,,0,0,0,0,280,0,0,0,,2005-11-01 00:00,2005-11-18 00:00,2007-07-02 08:01,2007-07-02 08:01,,2007-01-27 00:00,2007-01-27 00:00,,,2006-01-30 08:00,2006-03-17 17:00,,,,,PT_Normal,,,,,Mzk65OStT8C1eRfmEnynaw,mRnH/DcJYUqPl6dvzg0d5w,,,N,0,0,,,2007-02-01 02:43,2007-02-04 01:05,hbe4678,hbe4678,,,0
4284,12460465,14517,6816221,4047,1,100,N,N,N,CP_Drtn,TT_Task,DT_FixedDUR2,RV_OK,TK_Complete,PK02HMB20,02H MB221  101-B - Civil Prod. V. Data,,,,0,0,0,0,280,0,0,0,,2005-11-01 00:00,2005-11-18 00:00,2007-06-07 08:01,2007-06-07 08:01,,2007-01-27 00:00,2007-01-27 00:00,,,2006-01-30 08:00,2006-03-17 17:00,,,,,PT_Normal,,,,,p9A+MjM5Ram6Ti17qmv6hw,mRnH/DcJYUqPl6dvzg0d5w,,,N,0,0,,,2007-02-01 02:43,2007-02-04 01:05,hbe4678,hbe4678,,,0
4285,12460466,14517,6816221,4047,1,100,N,N,N,CP_Drtn,TT_Task,DT_FixedDUR2,RV_OK,TK_Complete,PK02HMB21,02H MB221  101-B - E&I Prod. V. Data,,,,0,0,0,0,280,0,0,0,,2005-11-01 00:00,2005-11-18 00:00,2009-02-13 17:00,2009-02-13 17:00,,2007-01-27 00:00,2007-01-27 00:00,,,2006-01-30 08:00,2006-03-17 17:00,,,,,PT_Normal,,,,,AKiMPpxFTny2jrU//HS6nA,mRnH/DcJYUqPl6dvzg0d5w,,,N,0,0,,,2007-02-01 02:43,2007-02-04 01:05,hbe4678,hbe4678,,,0
4286,12460467,14517,6816221,4047,1,100,N,N,N,CP_Drtn,TT_Task,DT_FixedDUR2,RV_OK,TK_Complete,PK02HMB32,02H MB610  101-BA/B/C  - Piping Prod. V. Data,,,,0,0,0,0,280,0,0,0,,2005-10-31 08:00,2005-12-19 00:00,2007-07-02 08:01,2007-07-02 08:01,,2007-01-27 00:00,2007-01-27 00:00,,,2005-10-31 08:00,2005-12-16 17:00,,,,,PT_Normal,,,,,oUrZSIk+SLS+Pul6nluFvg,9Pd9uNCKXUiJXB8rdHOzpQ,,,N,0,0,,,2007-02-01 02:43,2007-02-04 01:05,hbe4678,hbe4678,,,0
4287,12460468,14517,6816221,4047,1,100,N,N,N,CP_Drtn,TT_Task,DT_FixedDUR2,RV_OK,TK_Complete,PK02HMB33,02H MB610  101-BA/B/C - Civil Prod. V. Data,,,,0,0,0,0,280,0,0,0,,2005-10-31 08:00,2005-12-19 00:00,2007-06-07 08:01,2007-06-07 08:01,,2007-01-27 00:00,2007-01-27 00:00,,,2005-10-31 08:00,2005-12-16 17:00,,,,,PT_Normal,,,,,vJ5zk+kbSIGnhcd2TIIH8Q,9Pd9uNCKXUiJXB8rdHOzpQ,,,N,0,0,,,2007-02-01 02:43,2007-02-04 01:05,hbe4678,hbe4678,,,0
4288,12460469,14517,6816221,4047,1,100,N,N,N,CP_Drtn,TT_Task,DT_FixedDUR2,RV_OK,TK_Complete,PK02HMB34,02H MB610  101-BA/B/C - E&I Prod. V. Data,,,,0,0,0,0,280,0,0,0,,2005-10-31 08:00,2005-12-19 00:00,2009-02-13 17:00,2009-02-13 17:00,,2007-01-27 00:00,2007-01-27 00:00,,,2005-10-31 08:00,2005-12-16 17:00,,,,,PT_Normal,,,,,1+sJTjWhQQOQIvuMAfjG8w,9Pd9uNCKXUiJXB8rdHOzpQ,,,N,0,0,,,2007-02-01 02:43,2007-02-04 01:05,hbe4678,hbe4678,,,0
4289,12460470,14517,6816222,4047,1,100,N,N,N,CP_Drtn,TT_Task,DT_FixedDUR2,RV_OK,TK_Complete,ZZ1670,02L MC210  110-C - Piping Prod. V. Data,,,,0,0,0,0,280,0,0,0,,2005-11-09 08:00,2006-06-05 17:00,2007-03-20 08:01,2007-03-20 08:01,,2007-01-27 00:00,2007-01-27 00:00,,,2005-11-09 08:00,2005-12-27 17:00,,,,,PT_Normal,,,,,PzHo/WsYSTOyMrh6J9CShQ,DggQIIyTEEaF+ML68IgmtQ,,,N,0,0,,,2007-02-01 02:43,2007-02-04 01:05,hbe4678,hbe4678,,,0
4290,12460471,14517,6816222,4047,1,100,N,N,N,CP_Drtn,TT_Task,DT_FixedDUR2,RV_OK,TK_Complete,ZZ1680,02L MC210  110-C - Civil Prod. V. Data,,,,0,0,0,0,280,0,0,0,,2005-11-09 08:00,2006-06-05 17:00,2007-03-20 08:01,2007-03-20 08:01,,2007-01-27 00:00,2007-01-27 00:00,,,2005-11-09 08:00,2005-12-27 17:00,,,,,PT_Normal,,,,,bQUNTED7RrKLmzHpHJDvQg,DggQIIyTEEaF+ML68IgmtQ,,,N,0,0,,,2007-02-01 02:43,2007-02-04 01:05,hbe4678,hbe4678,,,0
4291,12460472,14517,6816222,4047,1,100,N,N,N,CP_Drtn,TT_Task,DT_FixedDUR2,RV_OK,TK_Complete,ZZ1690,02L MC210  110-C - E&I Prod. V. Data,,,,0,0,0,0,280,0,0,0,,2005-11-09 08:00,2006-06-05 17:00,2009-02-13 17:00,2009-02-13 17:00,,2007-01-27 00:00,2007-01-27 00:00,,,2005-11-09 08:00,2005-12-27 17:00,,,,,PT_Normal,,,,,0LSgOs9TSoeUCjfRuFn4tw,DggQIIyTEEaF+ML68IgmtQ,,,N,0,0,,,2007-02-01 02:43,2007-02-04 01:05,hbe4678,hbe4678,,,0
4292,12460473,14517,6816222,4047,1,100,N,N,N,CP_Drtn,TT_Task,DT_FixedDUR2,RV_OK,TK_Complete,ZZ1700,02M MC210  124-C - Piping Prod. V. Data,,,,0,0,0,0,280,0,0,0,,2005-11-09 08:00,2006-05-26 00:00,2007-06-19 08:01,2007-06-19 08:01,,2007-01-27 00:00,2007-01-27 00:00,,,2005-11-09 08:00,2005-12-27 17:00,,,,,PT_Normal,,,,,5uibEEF+T2aQm48EfOhD0g,InrK0UrQbkCSQoTKipExpw,,,N,0,0,,,2007-02-01 02:43,2007-02-04 01:05,hbe4678,hbe4678,,,0
4293,12460474,14517,6816222,4047,1,100,N,N,N,CP_Drtn,TT_Task,DT_FixedDUR2,RV_OK,TK_Complete,ZZ1710,02M MC210  124-C - Civil Prod. V. Data,,,,0,0,0,0,280,0,0,0,,2005-11-09 08:00,2006-06-16 17:00,2007-09-04 08:01,2007-09-04 08:01,,2007-01-27 00:00,2007-01-27 00:00,,,2005-11-09 08:00,2005-12-27 17:00,,,,,PT_Normal,,,,,RfmyBnVtQQWpHZ1yPqYu7w,InrK0UrQbkCSQoTKipExpw,,,N,0,0,,,2007-02-01 02:43,2007-02-04 01:05,hbe4678,hbe4678,,,0
4294,12460475,14517,6816222,4047,1,100,N,N,N,CP_Drtn,TT_Task,DT_FixedDUR2,RV_OK,TK_Complete,ZZ1720,02M MC210  124-C - E&I Prod. V. Data,,,,0,0,0,0,280,0,0,0,,2005-11-09 08:00,2006-06-16 17:00,2009-02-13 17:00,2009-02-13 17:00,,2007-01-27 00:00,2007-01-27 00:00,,,2005-11-09 08:00,2005-12-27 17:00,,,,,PT_Normal,,,,,h7O7rWLoQ325pl2NeeFfJw,InrK0UrQbkCSQoTKipExpw,,,N,0,0,,,2007-02-01 02:43,2007-02-04 01:05,hbe4678,hbe4678,,,0
4295,12460476,14517,6816222,4047,1,100,N,N,N,CP_Drtn,TT_Task,DT_FixedDUR2,RV_OK,TK_Complete,ZZ1760,"02L MC230  105-C, 106-C, 107-C, 109-C & 111-C - Piping Prod. V. Data",,,,0,0,0,0,280,0,0,0,,2005-11-09 08:00,2006-05-29 17:00,2007-01-09 08:01,2007-01-09 08:01,,2007-01-27 00:00,2007-01-27 00:00,,,2005-11-09 08:00,2005-12-27 17:00,,,,,PT_Normal,,,,,5rijCy0pSpuft+/q6xTvxA,T8Y2+rYIc06C9PoQe6CRIQ,,,N,0,0,,,2007-02-01 02:43,2007-02-04 01:05,hbe4678,hbe4678,,,0
4296,12460477,14517,6816222,4047,1,100,N,N,N,CP_Drtn,TT_Task,DT_FixedDUR2,RV_OK,TK_Complete,ZZ1770,"02L MC230  105-C, 106-C, 107-C, 109-C & 111-C - Civil Prod. V. Data",,,,0,0,0,0,280,0,0,0,,2005-11-09 08:00,2006-06-05 17:00,2007-03-20 08:01,2007-03-20 08:01,,2007-01-27 00:00,2007-01-27 00:00,,,2005-11-09 08:00,2005-12-27 17:00,,,,,PT_Normal,,,,,5gtxX4fiRK2jQeTGgOYevA,T8Y2+rYIc06C9PoQe6CRIQ,,,N,0,0,,,2007-02-01 02:43,2007-02-04 01:05,hbe4678,hbe4678,,,0
4297,12460478,14517,6816222,4047,1,100,N,N,N,CP_Drtn,TT_Task,DT_FixedDUR2,RV_OK,TK_Complete,ZZ1780,"02L MC230  105-C, 106-C, 107-C, 109-C & 111-C - E&I Prod. V. Data",,,,0,0,0,0,280,0,0,0,,2005-11-09 08:00,2006-06-05 17:00,2009-02-13 17:00,2009-02-13 17:00,,2007-01-27 00:00,2007-01-27 00:00,,,2005-11-09 08:00,2005-12-27 17:00,,,,,PT_Normal,,,,,gEtqlRJ9RdKjvEWWW1+uXw,T8Y2+rYIc06C9PoQe6CRIQ,,,N,0,0,,,2007-02-01 02:43,2007-02-04 01:05,hbe4678,hbe4678,,,0
4298,12460479,14517,6816222,4047,1,100,N,N,N,CP_Drtn,TT_Task,DT_FixedDUR2,RV_OK,TK_Complete,ZZ1790,"02H MC310  101,102-C - Piping Prod. V. Data",,,,0,0,0,0,280,0,0,0,,2006-02-03 08:00,2006-06-05 17:00,2007-07-02 08:01,2007-07-02 08:01,,2007-01-27 00:00,2007-01-27 00:00,,,2006-02-03 08:00,2006-03-23 17:00,,,,,PT_Normal,,,,,FdKir9fGSHG4Rt6kv5nd6Q,k3A1UocRrkS74uHcBV3Vyg,,,N,0,0,,,2007-02-01 02:43,2007-02-04 01:05,hbe4678,hbe4678,,,0
4299,12460480,14517,6816222,4047,1,100,N,N,N,CP_Drtn,TT_Task,DT_FixedDUR2,RV_OK,TK_Complete,ZZ1800,"02H MC310  101,102-C - Civil Prod. V. Data",,,,0,0,0,0,280,0,0,0,,2006-02-03 08:00,2006-05-25 00:00,2007-06-07 08:01,2007-06-07 08:01,,2007-01-27 00:00,2007-01-27 00:00,,,2006-02-03 08:00,2006-03-23 17:00,,,,,PT_Normal,,,,,g92I0qVlSHSkXB5yz3g4pg,k3A1UocRrkS74uHcBV3Vyg,,,N,0,0,,,2007-02-01 02:43,2007-02-04 01:05,hbe4678,hbe4678,,,0
4300,12460481,14517,6816222,4047,1,100,N,N,N,CP_Drtn,TT_Task,DT_FixedDUR2,RV_OK,TK_Complete,ZZ1620,02K MC210  174-C - Civil Prod. V. Data,,,,0,0,0,0,280,0,0,0,,2005-11-09 08:00,2006-06-05 17:00,2007-05-20 08:01,2007-05-20 08:01,,2007-01-27 00:00,2007-01-27 00:00,,,2005-11-09 08:00,2005-12-27 17:00,,,,,PT_Normal,,,,,5QBQsWvoSdu2CS/ni1OAgQ,3QABWhOXCkC2xOwnfc90kw,,,N,0,0,,,2007-02-01 02:43,2007-02-04 01:05,hbe4678,hbe4678,,,0
4301,12460482,14517,6816222,4047,1,100,N,N,N,CP_Drtn,TT_Task,DT_FixedDUR2,RV_OK,TK_Complete,ZZ1610,02K MC210  174-C - Piping Prod. V. Data,,,,0,0,0,0,280,0,0,0,,2005-11-09 08:00,2006-06-05 17:00,2007-06-18 08:00,2007-06-18 08:00,,2007-01-27 00:00,2007-01-27 00:00,,,2005-11-09 08:00,2005-12-27 17:00,,,,,PT_Normal,,,,,Dt3qFlspShasnYZgDldf6w,3QABWhOXCkC2xOwnfc90kw,,,N,0,0,,,2007-02-01 02:43,2007-02-04 01:05,hbe4678,hbe4678,,,0
4302,12460483,14517,6816222,4047,1,100,N,N,N,CP_Drtn,TT_Task,DT_FixedDUR2,RV_OK,TK_Complete,PK02LMC21,"02E MC230  114-C, 172-C & 183-C - Piping Prod. V. Data",,,,0,0,0,0,280,0,0,0,,2005-11-09 08:00,2006-06-09 00:00,2007-12-09 08:01,2007-12-09 08:01,,2007-01-27 00:00,2007-01-27 00:00,,,2005-11-09 08:00,2005-12-27 17:00,,,,,PT_Normal,,,,,r/ZqCizgQnuTOpbD58jo6g,HL/ub2IN40yiHBDwTyWyVw,,,N,0,0,,,2007-02-01 02:43,2007-02-04 01:05,hbe4678,hbe4678,,,0
4303,12460484,14517,6816222,4047,1,100,N,N,N,CP_Drtn,TT_Task,DT_FixedDUR2,RV_OK,TK_Complete,PK02LMC22,"02E MC230  114-C, 172-C & 183-C - Civil Prod. V. Data",,,,0,0,0,0,280,0,0,0,,2005-11-09 08:00,2006-06-05 00:00,2007-03-20 08:01,2007-03-20 08:01,,2007-01-27 00:00,2007-01-27 00:00,,,2005-11-09 08:00,2005-12-27 17:00,,,,,PT_Normal,,,,,ee0tOzDyRDemI+sPtGy7Jw,HL/ub2IN40yiHBDwTyWyVw,,,N,0,0,,,2007-02-01 02:43,2007-02-04 01:05,hbe4678,hbe4678,,,0
4304,12460485,14517,6816222,4047,1,100,N,N,N,CP_Drtn,TT_Task,DT_FixedDUR2,RV_OK,TK_Complete,PK02LMC23,"02E MC230  114-C, 172-C & 183-C - E&I Prod. V. Data",,,,0,0,0,0,280,0,0,0,,2005-11-09 08:00,2006-06-05 00:00,2007-07-09 08:00,2007-07-09 08:00,,2007-01-27 00:00,2007-01-27 00:00,,,2005-11-09 08:00,2005-12-27 17:00,,,,,PT_Normal,,,,,rUxSIxzxRQeu1QC4yIojxQ,HL/ub2IN40yiHBDwTyWyVw,,,N,0,0,,,2007-02-01 02:43,2007-02-04 01:05,hbe4678,hbe4678,,,0
4305,12460486,14517,6816222,4047,1,100,N,N,N,CP_Drtn,TT_Task,DT_FixedDUR2,RV_OK,TK_Complete,ZZ1430,"02C MC210  128-C, 134-C, 167-C - Civil Prod. V. Data",,,,0,0,0,0,280,0,0,0,,2005-11-09 08:00,2006-06-12 17:00,2007-08-07 08:01,2007-08-07 08:01,,2007-01-27 00:00,2007-01-27 00:00,,,2005-11-09 08:00,2005-12-27 17:00,,,,,PT_Normal,,,,,H/OmpSPHQpCPsL+uzZCmLQ,aE7Gji13BEOhpV1Wnjj8/Q,,,N,0,0,,,2007-02-01 02:43,2007-02-04 01:05,hbe4678,hbe4678,,,0
4306,12460487,14517,6816222,4047,1,100,N,N,N,CP_Drtn,TT_Task,DT_FixedDUR2,RV_OK,TK_Complete,ZZ1440,"02C MC210  128-C, 134-C, 167-C - E&I Prod. V. Data",,,,0,0,0,0,280,0,0,0,,2005-11-09 08:00,2006-06-12 17:00,2009-02-13 17:00,2009-02-13 17:00,,2007-01-27 00:00,2007-01-27 00:00,,,2005-11-09 08:00,2005-12-27 17:00,,,,,PT_Normal,,,,,j4jdJSEmRCW51ReHU3DilQ,aE7Gji13BEOhpV1Wnjj8/Q,,,N,0,0,,,2007-02-01 02:43,2007-02-04 01:05,hbe4678,hbe4678,,,0
4307,12460488,14517,6816222,4047,1,100,N,N,N,CP_Drtn,TT_Task,DT_FixedDUR2,RV_OK,TK_Complete,ZZ1480,02D MC210  127-C - Piping Prod. V. Data,,,,0,0,0,0,280,0,0,0,,2005-11-09 08:00,2006-05-01 00:00,2007-04-24 08:01,2007-04-24 08:01,,2007-01-27 00:00,2007-01-27 00:00,,,2005-11-09 08:00,2005-12-27 17:00,,,,,PT_Normal,,,,,VNVd1Z5JQ7+1ZxCu66L9vg,t/4nql6c1UGf9EhaWs33zQ,,,N,0,0,,,2007-02-01 02:43,2007-02-04 01:05,hbe4678,hbe4678,,,0
4308,12460489,14517,6816222,4047,1,100,N,N,N,CP_Drtn,TT_Task,DT_FixedDUR2,RV_OK,TK_Complete,ZZ1490,02D MC210  127-C - Civil Prod. V. Data,,,,0,0,0,0,280,0,0,0,,2005-11-09 08:00,2006-06-13 00:00,2007-12-09 08:01,2007-12-09 08:01,,2007-01-27 00:00,2007-01-27 00:00,,,2005-11-09 08:00,2005-12-27 17:00,,,,,PT_Normal,,,,,Pyb7NqBDSYq8BgQ/bIiX/A,t/4nql6c1UGf9EhaWs33zQ,,,N,0,0,,,2007-02-01 02:43,2007-02-04 01:05,hbe4678,hbe4678,,,0
4309,12460490,14517,6816222,4047,1,100,N,N,N,CP_Drtn,TT_Task,DT_FixedDUR2,RV_OK,TK_Complete,ZZ2000,"02N MC312  120-C,CF1,CF2,CF3,CF4 - Piping Prod. V. Data",,,,0,0,0,0,280,0,0,0,,2005-11-08 08:00,2005-12-28 17:00,2007-05-28 08:01,2007-05-28 08:01,,2007-01-27 00:00,2007-01-27 00:00,,,2005-11-08 08:00,2005-12-26 17:00,,,,,PT_Normal,,,,,E5IeP1SyQeOXxoOljvKNCg,vgGc6VkpDUeyskey1MVLUw,,,N,0,0,,,2007-02-01 02:43,2007-02-04 01:05,hbe4678,hbe4678,,,0
4310,12460491,14517,6816222,4047,1,100,N,N,N,CP_Drtn,TT_Task,DT_FixedDUR2,RV_OK,TK_Complete,ZZ2010,"02N MC312  120-C,CF1,CF2,CF3,CF4 - Civil Prod. V. Data",,,,0,0,0,0,280,0,0,0,,2005-11-08 08:00,2005-12-28 17:00,2007-09-19 08:01,2007-09-19 08:01,,2007-01-27 00:00,2007-01-27 00:00,,,2005-11-08 08:00,2005-12-26 17:00,,,,,PT_Normal,,,,,LyiASQrzS2WB7NWSQCH4uw,vgGc6VkpDUeyskey1MVLUw,,,N,0,0,,,2007-02-01 02:43,2007-02-04 01:05,hbe4678,hbe4678,,,0
4311,12460492,14517,6816222,4047,1,100,N,N,N,CP_Drtn,TT_Task,DT_FixedDUR2,RV_OK,TK_Complete,ZZ2020,"02N MC312  120-C,CF1,CF2,CF3,CF4 - E&I Prod. V. Data",,,,0,0,0,0,280,0,0,0,,2005-11-08 08:00,2005-12-28 17:00,2009-02-13 17:00,2009-02-13 17:00,,2007-01-27 00:00,2007-01-27 00:00,,,2005-11-08 08:00,2005-12-26 17:00,,,,,PT_Normal,,,,,4YNVT1eLS5CImTIxU/pmQg,vgGc6VkpDUeyskey1MVLUw,,,N,0,0,,,2007-02-01 02:43,2007-02-04 01:05,hbe4678,hbe4678,,,0
4312,12460493,14517,6816222,4047,1,100,N,N,N,CP_Drtn,TT_Task,DT_FixedDUR2,RV_OK,TK_Complete,ZZ2030,"02K MC610  188-CA,CB,CC - Piping Prod. V. Data",,,,0,0,0,0,280,0,0,0,,2006-01-03 08:00,2006-01-30 00:00,2007-06-18 08:00,2007-06-18 08:00,,2007-01-27 00:00,2007-01-27 00:00,,,2006-01-03 08:00,2006-02-20 17:00,,,,,PT_Normal,,,,,2bok82qgSnePMsXn4rKUpg,OgEYik8w1kerWEU92090sA,,,N,0,0,,,2007-02-01 02:43,2007-02-04 01:05,hbe4678,hbe4678,,,0
4313,12460494,14517,6816222,4047,1,100,N,N,N,CP_Drtn,TT_Task,DT_FixedDUR2,RV_OK,TK_Complete,ZZ2040,"02K MC610  188-CA,CB,CC - Civil Prod. V. Data",,,,0,0,0,0,280,0,0,0,,2006-01-03 08:00,2006-01-30 00:00,2007-05-20 08:01,2007-05-20 08:01,,2007-01-27 00:00,2007-01-27 00:00,,,2006-01-03 08:00,2006-02-20 17:00,,,,,PT_Normal,,,,,QIA5F2n+TUOpvYDIqzKmCw,OgEYik8w1kerWEU92090sA,,,N,0,0,,,2007-02-01 02:43,2007-02-04 01:05,hbe4678,hbe4678,,,0
4314,12460495,14517,6816222,4047,1,100,N,N,N,CP_Drtn,TT_Task,DT_FixedDUR2,RV_OK,TK_Complete,ZZ2050,"02K MC610  188-CA,CB,CC - E&I Prod. V. Data",,,,0,0,0,0,280,0,0,0,,2006-01-03 08:00,2006-01-30 00:00,2009-02-13 17:00,2009-02-13 17:00,,2007-01-27 00:00,2007-01-27 00:00,,,2006-01-03 08:00,2006-02-20 17:00,,,,,PT_Normal,,,,,GqSk9401Rcy69EGaYrtQgQ,OgEYik8w1kerWEU92090sA,,,N,0,0,,,2007-02-01 02:43,2007-02-04 01:05,hbe4678,hbe4678,,,0
4315,12460496,14517,6816222,4047,1,100,N,N,N,CP_Drtn,TT_Task,DT_FixedDUR2,RV_OK,TK_Complete,ZZ1810,"02H MC310  101,102-C - E&I Prod. V. Data",,,,0,0,0,0,280,0,0,0,,2006-02-03 08:00,2006-06-05 17:00,2009-02-13 17:00,2009-02-13 17:00,,2007-01-27 00:00,2007-01-27 00:00,,,2006-02-03 08:00,2006-03-23 17:00,,,,,PT_Normal,,,,,hR/Xijd6RUaDTQmRERTDLA,k3A1UocRrkS74uHcBV3Vyg,,,N,0,0,,,2007-02-01 02:43,2007-02-04 01:05,hbe4678,hbe4678,,,0
4316,12460497,14517,6816222,4047,1,100,N,N,N,CP_Drtn,TT_Task,DT_FixedDUR2,RV_OK,TK_Complete,ZZ1850,02J MC311  103-C1/C2 - Piping Prod. V. Data,,,,0,0,0,0,280,0,0,0,,2005-12-02 08:00,2006-06-05 17:00,2007-07-09 08:00,2007-07-09 08:00,,2007-01-27 00:00,2007-01-27 00:00,,,2005-12-02 08:00,2006-01-19 17:00,,,,,PT_Normal,,,,,JxH1Gw8RTt6mFDaxyvP6/w,Zbnl/7qA2Eyo21R/n4avdw,,,N,0,0,,,2007-02-01 02:43,2007-02-04 01:05,hbe4678,hbe4678,,,0
4317,12460498,14517,6816222,4047,1,100,N,N,N,CP_Drtn,TT_Task,DT_FixedDUR2,RV_OK,TK_Complete,ZZ1860,02J MC311  103-C1/C2 - Civil Prod. V. Data,,,,0,0,0,0,280,0,0,0,,2005-12-02 08:00,2006-04-03 00:00,2007-08-12 08:01,2007-08-12 08:01,,2007-01-27 00:00,2007-01-27 00:00,,,2005-12-02 08:00,2006-01-19 17:00,,,,,PT_Normal,,,,,kjwwdGfCRWSiV/qDJ6Fxpw,Zbnl/7qA2Eyo21R/n4avdw,,,N,0,0,,,2007-02-01 02:43,2007-02-04 01:05,hbe4678,hbe4678,,,0
4318,12460499,14517,6816222,4047,1,100,N,N,N,CP_Drtn,TT_Task,DT_FixedDUR2,RV_OK,TK_Complete,ZZ1870,02J MC311  103-C1/C2 - E&I Prod. V. Data,,,,0,0,0,0,280,0,0,0,,2005-12-02 08:00,2006-06-05 17:00,2009-02-13 17:00,2009-02-13 17:00,,2007-01-27 00:00,2007-01-27 00:00,,,2005-12-02 08:00,2006-01-19 17:00,,,,,PT_Normal,,,,,CiDUlDs8RayfzVeUmab7Cg,Zbnl/7qA2Eyo21R/n4avdw,,,N,0,0,,,2007-02-01 02:43,2007-02-04 01:05,hbe4678,hbe4678,,,0
4319,12460500,14517,6816222,4047,1,100,N,N,N,CP_Drtn,TT_Task,DT_FixedDUR2,RV_OK,TK_Complete,ZZ1910,02M MC311  123-C1/C2A/C2B - Piping Prod. V. Data,,,,0,0,0,0,280,0,0,0,,2005-12-02 08:00,2006-05-09 00:00,2007-06-19 08:01,2007-06-19 08:01,,2007-01-27 00:00,2007-01-27 00:00,,,2005-12-02 08:00,2006-01-19 17:00,,,,,PT_Normal,,,,,LS16hz5fRXmnJYGJ8+e0tw,wauVGvzem0myuGMU4hQKHQ,,,N,0,0,,,2007-02-01 02:43,2007-02-04 01:05,hbe4678,hbe4678,,,0
4320,12460501,14517,6816222,4047,1,100,N,N,N,CP_Drtn,TT_Task,DT_FixedDUR2,RV_OK,TK_Complete,ZZ1920,02M MC311  123-C1/C2A/C2B - Civil Prod. V. Data,,,,0,0,0,0,280,0,0,0,,2005-12-02 08:00,2006-04-03 00:00,2007-09-04 08:01,2007-09-04 08:01,,2007-01-27 00:00,2007-01-27 00:00,,,2005-12-02 08:00,2006-01-19 17:00,,,,,PT_Normal,,,,,dnjDEvNbQYq3IK/W7WGBSA,wauVGvzem0myuGMU4hQKHQ,,,N,0,0,,,2007-02-01 02:43,2007-02-04 01:05,hbe4678,hbe4678,,,0
4321,12460502,14517,6816222,4047,1,100,N,N,N,CP_Drtn,TT_Task,DT_FixedDUR2,RV_OK,TK_Complete,ZZ1930,02M MC311  123-C1/C2A/C2B - E&I Prod. V. Data,,,,0,0,0,0,280,0,0,0,,2005-12-02 08:00,2006-06-05 17:00,2009-02-13 17:00,2009-02-13 17:00,,2007-01-27 00:00,2007-01-27 00:00,,,2005-12-02 08:00,2006-01-19 17:00,,,,,PT_Normal,,,,,seKcpxZgR/aU/LLbzMgZ0Q,wauVGvzem0myuGMU4hQKHQ,,,N,0,0,,,2007-02-01 02:43,2007-02-04 01:05,hbe4678,hbe4678,,,0
4322,12460503,14517,6816222,4047,1,100,N,N,N,CP_Drtn,TT_Task,DT_FixedDUR2,RV_OK,TK_Complete,ZZ1940,02M MC312  121-C - Piping Prod. V. Data,,,,0,0,0,0,280,0,0,0,,2005-11-08 08:00,2005-12-28 00:00,2007-05-28 08:01,2007-05-28 08:01,,2007-01-27 00:00,2007-01-27 00:00,,,2005-11-08 08:00,2005-12-26 17:00,,,,,PT_Normal,,,,,Rc4jAO6KToaBLmLE9imaXw,zcqN5IDuSES6xLelO18L4g,,,N,0,0,,,2007-02-01 02:43,2007-02-04 01:05,hbe4678,hbe4678,,,0
4323,12460504,14517,6816222,4047,1,100,N,N,N,CP_Drtn,TT_Task,DT_FixedDUR2,RV_OK,TK_Complete,ZZ1950,02M MC312  121-C - Civil Prod. V. Data,,,,0,0,0,0,280,0,0,0,,2005-11-08 08:00,2005-12-28 00:00,2007-09-04 08:01,2007-09-04 08:01,,2007-01-27 00:00,2007-01-27 00:00,,,2005-11-08 08:00,2005-12-26 17:00,,,,,PT_Normal,,,,,Ngw7qVmUR9ObjsKHMvIOXw,zcqN5IDuSES6xLelO18L4g,,,N,0,0,,,2007-02-01 02:43,2007-02-04 01:05,hbe4678,hbe4678,,,0
4324,12460505,14517,6816222,4047,1,100,N,N,N,CP_Drtn,TT_Task,DT_FixedDUR2,RV_OK,TK_Complete,ZZ1960,02M MC312  121-C - E&I Prod. V. Data,,,,0,0,0,0,280,0,0,0,,2005-11-08 08:00,2005-12-28 00:00,2009-02-13 17:00,2009-02-13 17:00,,2007-01-27 00:00,2007-01-27 00:00,,,2005-11-08 08:00,2005-12-26 17:00,,,,,PT_Normal,,,,,fkvkEdr/RvmlXsWe3lPqYQ,zcqN5IDuSES6xLelO18L4g,,,N,0,0,,,2007-02-01 02:43,2007-02-04 01:05,hbe4678,hbe4678,,,0
4325,12460506,14517,6816222,4047,1,100,N,N,N,CP_Drtn,TT_Task,DT_FixedDUR2,RV_OK,TK_Complete,ZZ1630,02K MC210  174-C - E&I Prod. V. Data,,,,0,0,0,0,280,0,0,0,,2005-11-09 08:00,2006-06-05 17:00,2009-02-13 17:00,2009-02-13 17:00,,2007-01-27 00:00,2007-01-27 00:00,,,2005-11-09 08:00,2005-12-27 17:00,,,,,PT_Normal,,,,,8yMsMwtOSlCPGAyihCj6FQ,3QABWhOXCkC2xOwnfc90kw,,,N,0,0,,,2007-02-01 02:43,2007-02-04 01:05,hbe4678,hbe4678,,,0
4326,12460507,14517,6816222,13330,1,100,N,N,N,CP_Units,TT_Task,DT_FixedDUR2,RV_OK,TK_Complete,PK02JMC116,02J Exchangers - Recv/Accepted Planning Data,,,,0,0,0,0,8,0,0,0,,2005-07-21 00:00,2005-07-21 17:00,2007-05-07 08:00,2007-05-07 08:00,,2007-01-27 00:00,2007-01-27 00:00,,,2005-07-18 08:00,2005-07-18 17:00,,,,,PT_Normal,,,,,MtwgDPJgSBuWtpY3rqbc6Q,MtVw/74GhE6OPYsgs47pHR,,,N,0,0,,,2007-02-01 02:43,2007-02-04 01:05,hbe4678,hbe4678,,,0
4327,12460508,14517,6816222,13330,1,100,N,N,N,CP_Units,TT_Task,DT_FixedDUR2,RV_OK,TK_Complete,PK02KMC116,02K Exchangers - Recv/Accepted Planning Data,,,,0,0,0,0,8,0,0,0,,2006-01-03 08:00,2006-01-03 17:00,2007-06-18 08:00,2007-06-18 08:00,,2007-01-27 00:00,2007-01-27 00:00,,,2006-01-03 08:00,2006-01-03 17:00,,,,,PT_Normal,,,,,IkhDWLgHQ9y5niBgz1qdeQ,LwTCrShWa0S1va6YPQeQhh,,,N,0,0,,,2007-02-01 02:43,2007-02-04 01:05,hbe4678,hbe4678,,,0
4328,12460509,14517,6816222,13330,1,100,N,N,N,CP_Units,TT_Task,DT_FixedDUR2,RV_OK,TK_Complete,PK02MMC116,02M Exchangers - Recv/Accepted Planning Data,,,,0,0,0,0,8,0,0,0,,2005-07-21 00:00,2005-07-21 17:00,2007-05-07 08:00,2007-05-07 08:00,,2007-01-27 00:00,2007-01-27 00:00,,,2005-07-18 08:00,2005-07-18 17:00,,,,,PT_Normal,,,,,sMg09QQrSAWKmDbobpPUeg,8m9rXnTAh0yIpsVUWmfFGx,,,N,0,0,,,2007-02-01 02:43,2007-02-04 01:05,hbe4678,hbe4678,,,0
4329,12460510,14517,6816222,13330,1,100,N,N,N,CP_Units,TT_Task,DT_FixedDUR2,RV_OK,TK_Complete,PK02NMC116,02N Exchangers - Recv/Accepted Planning Data,,,,0,0,0,0,8,0,0,0,,2005-07-21 00:00,2005-07-21 17:00,2007-05-07 08:00,2007-05-07 08:00,,2007-01-27 00:00,2007-01-27 00:00,,,2005-07-18 08:00,2005-07-18 17:00,,,,,PT_Normal,,,,,Th8nC4HLRcGYhTyx7DhNCA,trPVECezcUWzbobsJTHjxx,,,N,0,0,,,2007-02-01 02:43,2007-02-04 01:05,hbe4678,hbe4678,,,0
4330,12460511,14517,6816222,4047,1,100,N,N,N,CP_Drtn,TT_Task,DT_FixedDUR2,RV_OK,TK_Complete,PK02AMC14,02A MC210  160-C - Piping Prod. V. Data,,,,0,0,0,0,280,0,0,0,,2005-11-09 08:00,2006-06-05 17:00,2007-05-27 08:01,2007-05-27 08:01,,2007-01-27 00:00,2007-01-27 00:00,,,2005-11-09 08:00,2005-12-27 17:00,,,,,PT_Normal,,,,,9ZiasZv1QQm9WGDpoTC4Rw,hkdUo4C1rUmQiQJpvgRC6w,,,N,0,0,,,2007-02-01 02:43,2007-02-04 01:05,hbe4678,hbe4678,,,0
4331,12460512,14517,6816222,4047,1,100,N,N,N,CP_Drtn,TT_Task,DT_FixedDUR2,RV_OK,TK_Complete,PK02AMC15,02A MC210  160-C - Civil Prod. V. Data,,,,0,0,0,0,280,0,0,0,,2005-11-09 08:00,2006-06-05 17:00,2007-09-04 08:01,2007-09-04 08:01,,2007-01-27 00:00,2007-01-27 00:00,,,2005-11-09 08:00,2005-12-27 17:00,,,,,PT_Normal,,,,,J5dE/HMARL+vBuXVXCPApQ,hkdUo4C1rUmQiQJpvgRC6w,,,N,0,0,,,2007-02-01 02:43,2007-02-04 01:05,hbe4678,hbe4678,,,0
4332,12460513,14517,6816222,4047,1,100,N,N,N,CP_Drtn,TT_Task,DT_FixedDUR2,RV_OK,TK_Complete,PK02AMC16,02A MC210  160-C - E&I Prod. V. Data,,,,0,0,0,0,280,0,0,0,,2005-11-09 08:00,2006-06-05 17:00,2009-02-13 17:00,2009-02-13 17:00,,2007-01-27 00:00,2007-01-27 00:00,,,2005-11-09 08:00,2005-12-27 17:00,,,,,PT_Normal,,,,,7lwsPjZRQWuyv5/K3QrMMA,hkdUo4C1rUmQiQJpvgRC6w,,,N,0,0,,,2007-02-01 02:43,2007-02-04 01:05,hbe4678,hbe4678,,,0
4333,12460514,14517,6816222,4047,1,100,N,N,N,CP_Drtn,TT_Task,DT_FixedDUR2,RV_OK,TK_Complete,PK02AMC17,02A MC610  161-C - Piping Prod. V. Data,,,,0,0,0,0,280,0,0,0,,2006-01-03 08:00,2006-01-30 00:00,2007-05-27 08:01,2007-05-27 08:01,,2007-01-27 00:00,2007-01-27 00:00,,,2006-01-03 08:00,2006-02-20 17:00,,,,,PT_Normal,,,,,zXsNKzuwRxG5TW1+biQC0w,TeKksngahUa+r2Bbm9wKDw,,,N,0,0,,,2007-02-01 02:43,2007-02-04 01:05,hbe4678,hbe4678,,,0
4334,12460515,14517,6816222,4047,1,100,N,N,N,CP_Drtn,TT_Task,DT_FixedDUR2,RV_OK,TK_Complete,PK02AMC18,02A MC610  161-C - Civil Prod. V. Data,,,,0,0,0,0,280,0,0,0,,2006-01-03 08:00,2006-01-30 00:00,2007-09-04 08:01,2007-09-04 08:01,,2007-01-27 00:00,2007-01-27 00:00,,,2006-01-03 08:00,2006-02-20 17:00,,,,,PT_Normal,,,,,bJf5IF8TSkGDRBW+kvVl7Q,TeKksngahUa+r2Bbm9wKDw,,,N,0,0,,,2007-02-01 02:43,2007-02-04 01:05,hbe4678,hbe4678,,,0
4335,12460516,14517,6816222,4047,1,100,N,N,N,CP_Drtn,TT_Task,DT_FixedDUR2,RV_OK,TK_Complete,PK02AMC19,02A MC610  161-C - E&I Prod. V. Data,,,,0,0,0,0,280,0,0,0,,2006-01-03 08:00,2006-01-30 00:00,2009-02-13 17:00,2009-02-13 17:00,,2007-01-27 00:00,2007-01-27 00:00,,,2006-01-03 08:00,2006-02-20 17:00,,,,,PT_Normal,,,,,+F0aacImTlKyCYSYNRshnA,TeKksngahUa+r2Bbm9wKDw,,,N,0,0,,,2007-02-01 02:43,2007-02-04 01:05,hbe4678,hbe4678,,,0
4336,12460517,14517,6816222,4047,1,100,N,N,N,CP_Drtn,TT_Task,DT_FixedDUR2,RV_OK,TK_Complete,ZZ1510,"02E MC210  115-C, 130-C - Piping Prod. V. Data",,,,0,0,0,0,280,0,0,0,,2005-11-09 08:00,2006-05-26 00:00,2007-04-15 08:01,2007-04-15 08:01,,2007-01-27 00:00,2007-01-27 00:00,,,2005-11-09 08:00,2005-12-27 17:00,,,,,PT_Normal,,,,,3lsRtrGeRw2QJ5HUJv1ehA,xRWmI65qMUCu6WlbXNPLZg,,,N,0,0,,,2007-02-01 02:43,2007-02-04 01:05,hbe4678,hbe4678,,,0
4337,12460518,14517,6816222,4047,1,100,N,N,N,CP_Drtn,TT_Task,DT_FixedDUR2,RV_OK,TK_Complete,ZZ1520,"02E MC210  115-C, 130-C - Civil Prod. V. Data",,,,0,0,0,0,280,0,0,0,,2005-11-09 08:00,2006-06-09 00:00,2007-12-09 08:01,2007-12-09 08:01,,2007-01-27 00:00,2007-01-27 00:00,,,2005-11-09 08:00,2005-12-27 17:00,,,,,PT_Normal,,,,,OAyjq8j6SNmOZ1hsPh8xJw,xRWmI65qMUCu6WlbXNPLZg,,,N,0,0,,,2007-02-01 02:43,2007-02-04 01:05,hbe4678,hbe4678,,,0
4338,12460519,14517,6816222,4047,1,100,N,N,N,CP_Drtn,TT_Task,DT_FixedDUR2,RV_OK,TK_Complete,ZZ1530,"02E MC210  115-C, 130-C - E&I Prod. V. Data",,,,0,0,0,0,280,0,0,0,,2005-11-09 08:00,2006-06-13 00:00,2009-02-13 17:00,2009-02-13 17:00,,2007-01-27 00:00,2007-01-27 00:00,,,2005-11-09 08:00,2005-12-27 17:00,,,,,PT_Normal,,,,,8OIfqj3FQxG68k7/iWoymg,xRWmI65qMUCu6WlbXNPLZg,,,N,0,0,,,2007-02-01 02:43,2007-02-04 01:05,hbe4678,hbe4678,,,0
4339,12460520,14517,6816222,4047,1,100,N,N,N,CP_Drtn,TT_Task,DT_FixedDUR2,RV_OK,TK_Complete,ZZ1500,02D MC210  127-C - E&I Prod. V. Data,,,,0,0,0,0,280,0,0,0,,2005-11-09 08:00,2006-06-13 00:00,2009-02-13 17:00,2009-02-13 17:00,,2007-01-27 00:00,2007-01-27 00:00,,,2005-11-09 08:00,2005-12-27 17:00,,,,,PT_Normal,,,,,cWmEZpttQ5iiwEw1zoXWSQ,t/4nql6c1UGf9EhaWs33zQ,,,N,0,0,,,2007-02-01 02:43,2007-02-04 01:05,hbe4678,hbe4678,,,0
4340,12460521,14517,6816222,4047,1,100,N,N,N,CP_Drtn,TT_Task,DT_FixedDUR2,RV_OK,TK_Complete,ZZ1540,02G MC210  133-C - Piping Prod. V. Data,,,,0,0,0,0,280,0,0,0,,2005-11-09 08:00,2006-06-23 17:00,2007-06-07 08:01,2007-06-07 08:01,,2007-01-27 00:00,2007-01-27 00:00,,,2005-11-09 08:00,2005-12-27 17:00,,,,,PT_Normal,,,,,bADxBSUZT6OA+NFhkV9Jzw,Anr/OuC0aUWqJSyOBRFXIw,,,N,0,0,,,2007-02-01 02:43,2007-02-04 01:05,hbe4678,hbe4678,,,0
4341,12460522,14517,6816222,4047,1,100,N,N,N,CP_Drtn,TT_Task,DT_FixedDUR2,RV_OK,TK_Complete,ZZ1550,02G MC210  133-C - Civil Prod. V. Data,,,,0,0,0,0,280,0,0,0,,2005-11-09 08:00,2006-06-23 17:00,2007-07-02 08:01,2007-07-02 08:01,,2007-01-27 00:00,2007-01-27 00:00,,,2005-11-09 08:00,2005-12-27 17:00,,,,,PT_Normal,,,,,umAT9wrSRH+sdhmTpiAYWw,Anr/OuC0aUWqJSyOBRFXIw,,,N,0,0,,,2007-02-01 02:43,2007-02-04 01:05,hbe4678,hbe4678,,,0
4342,12460523,14517,6816222,4047,1,100,N,N,N,CP_Drtn,TT_Task,DT_FixedDUR2,RV_OK,TK_Complete,ZZ1560,02G MC210  133-C - E&I Prod. V. Data,,,,0,0,0,0,280,0,0,0,,2005-11-09 08:00,2006-06-23 17:00,2009-02-13 17:00,2009-02-13 17:00,,2007-01-27 00:00,2007-01-27 00:00,,,2005-11-09 08:00,2005-12-27 17:00,,,,,PT_Normal,,,,,JZVfqCTcQymljHY4C1+Jyg,Anr/OuC0aUWqJSyOBRFXIw,,,N,0,0,,,2007-02-01 02:43,2007-02-04 01:05,hbe4678,hbe4678,,,0
4343,12460524,14517,6816222,4047,1,100,N,N,N,CP_Drtn,TT_Task,DT_FixedDUR2,RV_OK,TK_Complete,ZZ1580,02J MC210  173-C - Civil Prod. V. Data,,,,0,0,0,0,280,0,0,0,,2005-11-09 08:00,2006-04-03 00:00,2007-08-12 08:01,2007-08-12 08:01,,2007-01-27 00:00,2007-01-27 00:00,,,2005-11-09 08:00,2005-12-27 17:00,,,,,PT_Normal,,,,,UVQZrfeETbya/WrA0HN8Bg,RYFN+HX5C0CfRNwq9HjvjQ,,,N,0,0,,,2007-02-01 02:43,2007-02-04 01:05,hbe4678,hbe4678,,,0
4344,12460525,14517,6816222,4047,1,100,N,N,N,CP_Drtn,TT_Task,DT_FixedDUR2,RV_OK,TK_Complete,ZZ1590,02J MC210  173-C - Piping Prod. V. Data,,,,0,0,0,0,280,0,0,0,,2005-11-09 08:00,2006-06-05 17:00,2007-07-09 08:00,2007-07-09 08:00,,2007-01-27 00:00,2007-01-27 00:00,,,2005-11-09 08:00,2005-12-27 17:00,,,,,PT_Normal,,,,,Fj0Shoi9QQ2vBFUo2ic6Xg,RYFN+HX5C0CfRNwq9HjvjQ,,,N,0,0,,,2007-02-01 02:43,2007-02-04 01:05,hbe4678,hbe4678,,,0
4345,12460526,14517,6816222,4047,1,100,N,N,N,CP_Drtn,TT_Task,DT_FixedDUR2,RV_OK,TK_Complete,ZZ1600,02J MC210  173-C - E&I Prod. V. Data,,,,0,0,0,0,280,0,0,0,,2005-11-09 08:00,2006-06-05 17:00,2009-02-13 17:00,2009-02-13 17:00,,2007-01-27 00:00,2007-01-27 00:00,,,2005-11-09 08:00,2005-12-27 17:00,,,,,PT_Normal,,,,,+Jxjn+r0R9GXXtG/H6HENA,RYFN+HX5C0CfRNwq9HjvjQ,,,N,0,0,,,2007-02-01 02:43,2007-02-04 01:05,hbe4678,hbe4678,,,0
4346,12460527,14517,6816222,4047,1,100,N,N,N,CP_Drtn,TT_Task,DT_FixedDUR2,RV_OK,TK_Complete,ZZ1420,"02C MC210  128-C, 134-C, 167-C - Piping Prod. V. Data",,,,0,0,0,0,280,0,0,0,,2005-11-09 08:00,2006-05-01 00:00,2007-05-03 08:01,2007-05-03 08:01,,2007-01-27 00:00,2007-01-27 00:00,,,2005-11-09 08:00,2005-12-27 17:00,,,,,PT_Normal,,,,,X3HrUoIYRgm2+dpT4PA3Ow,aE7Gji13BEOhpV1Wnjj8/Q,,,N,0,0,,,2007-02-01 02:43,2007-02-04 01:05,hbe4678,hbe4678,,,0
4347,12460528,14517,6816222,13330,1,100,N,N,N,CP_Units,TT_Task,DT_FixedDUR2,RV_OK,TK_Complete,PK02AMC116,02A Exchangers - Recv/Accepted Planning Data,,,,0,0,0,0,8,0,0,0,,2005-12-26 00:00,2005-12-26 00:00,2007-05-07 08:00,2007-05-07 08:00,,2007-01-27 00:00,2007-01-27 00:00,,,2006-01-03 08:00,2006-01-03 17:00,,,,,PT_Normal,,,,,8bWiJ6+bSkyENaAIkqRddA,Uix23lqnJUqcS4EG4sDy1h,,,N,0,0,,,2007-02-01 02:43,2007-02-04 01:05,hbe4678,hbe4678,,,0
4348,12460529,14517,6816222,13330,1,100,N,N,N,CP_Units,TT_Task,DT_FixedDUR2,RV_OK,TK_Complete,PK02CMC116,02C Exchangers - Recv/Accepted Planning Data,,,,0,0,0,0,8,0,0,0,,2005-07-21 00:00,2005-07-21 17:00,2007-05-03 08:01,2007-05-03 08:01,,2007-01-27 00:00,2007-01-27 00:00,,,2005-07-12 08:00,2005-07-12 17:00,,,,,PT_Normal,,,,,+Zt5+RoRQD2d160pvylWuA,,,,N,0,0,,,2007-02-01 02:43,2007-02-04 01:05,hbe4678,hbe4678,,,0
4349,12460530,14517,6816222,13330,1,100,N,N,N,CP_Units,TT_Task,DT_FixedDUR2,RV_OK,TK_Complete,PK02HMC116,02H Exchangers - Recv/Accepted Planning Data,,,,0,0,0,0,8,0,0,0,,2005-06-28 08:00,2005-06-28 17:00,2007-04-28 08:01,2007-04-28 08:01,,2007-01-27 00:00,2007-01-27 00:00,,,2005-06-28 08:00,2005-06-28 17:00,,,,,PT_Normal,,,,,DNYPaSBMSIOPBldgSmADgQ,,,,N,0,0,,,2007-02-01 02:43,2007-02-04 01:05,hbe4678,hbe4678,,,0
4350,12460531,14517,6816222,13330,1,100,N,N,N,CP_Units,TT_Task,DT_FixedDUR2,RV_OK,TK_Complete,PK02LMC116,02L Exchangers - Recv/Accepted Planning Data,,,,0,0,0,0,8,0,0,0,,2005-07-21 00:00,2005-07-21 17:00,2007-01-09 08:01,2007-01-09 08:01,,2007-01-27 00:00,2007-01-27 00:00,,,2005-07-12 08:00,2005-07-12 17:00,,,,,PT_Normal,,,,,QYWdWIofReqqUtKauIuOvg,,,,N,0,0,,,2007-02-01 02:43,2007-02-04 01:05,hbe4678,hbe4678,,,0
4351,12460532,14517,6816222,13330,1,100,N,N,N,CP_Units,TT_Task,DT_FixedDUR2,RV_OK,TK_Complete,PK02DMC116,02D Exchangers - Recv/Accepted Planning Data,,,,0,0,0,0,8,0,0,0,,2005-07-21 00:00,2005-07-21 17:00,2007-04-24 08:01,2007-04-24 08:01,,2007-01-27 00:00,2007-01-27 00:00,,,2005-07-12 08:00,2005-07-12 17:00,,,,,PT_Normal,,,,,uljPg6ZtQIi6XVVrgYJTpw,6Ra7uCPebUOVY7KxUVG7Xx,,,N,0,0,,,2007-02-01 02:43,2007-02-04 01:05,hbe4678,hbe4678,,,0
4352,12460533,14517,6816222,13330,1,100,N,N,N,CP_Units,TT_Task,DT_FixedDUR2,RV_OK,TK_Complete,PK02EMC116,02E Exchangers - Recv/Accepted Planning Data,,,,0,0,0,0,8,0,0,0,,2005-07-21 00:00,2005-07-21 17:00,2007-04-15 08:01,2007-04-15 08:01,,2007-01-27 00:00,2007-01-27 00:00,,,2005-07-12 08:00,2005-07-12 17:00,,,,,PT_Normal,,,,,eEEee0OsSdOhHT7rXcUAuA,Jed15ScPLk2Tz9Scp0f5fR,,,N,0,0,,,2007-02-01 02:43,2007-02-04 01:05,hbe4678,hbe4678,,,0
4353,12460534,14517,6816223,4047,1,100,N,N,N,CP_Drtn,TT_Task,DT_FixedDUR2,RV_OK,TK_Complete,PK02HMD21,02H MD301  103-D Secondary Reformer - Prod. V. Data,,,,0,0,0,0,280,0,0,0,,2005-10-10 00:00,2006-06-05 17:00,2007-07-02 08:01,2007-07-02 08:01,,2007-01-27 00:00,2007-01-27 00:00,,,2006-01-30 08:00,2006-03-17 17:00,,,,,PT_Normal,,,,,OPbMWWhnTbWeXccKrLW5NA,,,,N,0,0,,,2007-02-01 02:43,2007-02-04 01:05,hbe4678,hbe4678,,,0
4354,12460535,14517,6816223,4047,1,100,N,N,N,CP_Drtn,TT_Task,DT_FixedDUR2,RV_OK,TK_Complete,PK02HMD22,02H MD501  107-D Primary Reformer Effluent Transfer Line - Prod. V. Data,,,,0,0,0,0,280,0,0,0,,2005-09-26 00:00,2006-03-27 17:00,2007-07-02 08:01,2007-07-02 08:01,,2007-01-27 00:00,2007-01-27 00:00,,,2006-01-30 08:00,2006-03-17 17:00,,,,,PT_Normal,,,,,UunsWwanTEaFAlc5u/olnw,,,,N,0,0,,,2007-02-01 02:43,2007-02-04 01:05,hbe4678,hbe4678,,,0
4355,12460536,14517,6816223,4047,1,100,N,N,N,CP_Drtn,TT_Task,DT_FixedDUR2,RV_OK,TK_Complete,PK02HMD23,02H MD405  156-F Steam Blowdown Drum - Prod. V. Data,,,,0,0,0,0,280,0,0,0,,2006-01-30 08:00,2006-01-30 17:00,2007-07-02 08:01,2007-07-02 08:01,,2007-01-27 00:00,2007-01-27 00:00,,,2006-01-30 08:00,2006-03-17 17:00,,,,,PT_Normal,,,,,pPd2dF2SQYm6gU+Tx+oztQ,,,,N,0,0,,,2007-02-01 02:43,2007-02-04 01:05,hbe4678,hbe4678,,,0
4356,12460537,14517,6816223,4047,1,100,N,N,N,CP_Drtn,TT_Task,DT_FixedDUR2,RV_OK,TK_Complete,PK02JMD05,02J MD304  108-DA Desulfurizer - Prod. V. Data,,,,0,0,0,0,280,0,0,0,,2005-11-30 00:00,2006-05-02 00:00,2007-07-09 08:00,2007-07-09 08:00,,2007-01-27 00:00,2007-01-27 00:00,,,2006-03-27 08:00,2006-05-12 17:00,,,,,PT_Normal,,,,,Xamrn62vRDKjrS3mJjiWUQ,,,,N,0,0,,,2007-02-01 02:43,2007-02-04 01:05,hbe4678,hbe4678,,,0
4357,12460538,14517,6816223,4047,1,100,N,N,N,CP_Drtn,TT_Task,DT_FixedDUR2,RV_OK,TK_Complete,PK02JMD06,02J MD304  108-DB Desulfurizer - Prod. V. Data,,,,0,0,0,0,280,0,0,0,,2005-11-30 00:00,2006-05-02 17:00,2007-07-09 08:00,2007-07-09 08:00,,2007-01-27 00:00,2007-01-27 00:00,,,2006-03-27 08:00,2006-05-12 17:00,,,,,PT_Normal,,,,,t2WTr1WaTTSjWtTAZBmtUA,,,,N,0,0,,,2007-02-01 02:43,2007-02-04 01:05,hbe4678,hbe4678,,,0
4358,12460539,14517,6816223,13330,1,100,N,N,N,CP_Units,TT_Task,DT_FixedDUR2,RV_OK,TK_Complete,PK02HMD222,"02H Recv./Accept Planning Data - Vessels (103,107-D,156-F)",,,,0,0,0,0,8,0,0,0,,2005-12-05 00:00,2005-12-05 00:00,2007-04-28 08:01,2007-04-28 08:01,,2007-01-27 00:00,2007-01-27 00:00,,,2006-01-03 08:00,2006-01-03 17:00,,,,,PT_Normal,,,,,nfQPNMJcQA+XXxRKexyZDQ,,,,N,0,0,,,2007-02-01 02:43,2007-02-04 01:05,hbe4678,hbe4678,,,0
4359,12460540,14517,6816223,4047,1,100,N,N,N,CP_Drtn,TT_Task,DT_FixedDUR2,RV_OK,TK_Complete,PK02AMD04,02A MD202  103/4/5-E LP Ammonia Scrubber - Piping Prod. V. Data,,,,0,0,0,0,280,0,0,0,,2005-12-13 08:00,2006-01-30 17:00,2007-05-27 08:01,2007-05-27 08:01,,2007-01-27 00:00,2007-01-27 00:00,,,2005-09-16 08:00,2005-11-03 17:00,,,,,PT_Normal,,,,,2Q5Q/BVvTaieWIMJ0z5w4w,kijgeMx750OYiAa73f95lQ,,,N,0,0,,,2007-02-01 02:43,2007-02-04 01:05,hbe4678,hbe4678,,,0
4360,12460541,14517,6816223,4047,1,100,N,N,N,CP_Drtn,TT_Task,DT_FixedDUR2,RV_OK,TK_Complete,PK02AMD05,02A MD202  103/4/5-E LP Ammonia Scrubber - Civil Prod. V. Data,,,,0,0,0,0,280,0,0,0,,2005-12-13 08:00,2006-01-30 17:00,2007-05-27 08:01,2007-05-27 08:01,,2007-01-27 00:00,2007-01-27 00:00,,,2005-09-16 08:00,2005-11-03 17:00,,,,,PT_Normal,,,,,q4qM8z75SkK7J45myWAfMg,kijgeMx750OYiAa73f95lQ,,,N,0,0,,,2007-02-01 02:43,2007-02-04 01:05,hbe4678,hbe4678,,,0
4361,12460542,14517,6816223,4047,1,100,N,N,N,CP_Drtn,TT_Task,DT_FixedDUR2,RV_OK,TK_Complete,PK02AMD06,02A MD202  103/4/5-E LP Ammonia Scrubber - E&I Prod. V. Data,,,,0,0,0,0,280,0,0,0,,2005-12-13 08:00,2006-01-30 17:00,2007-05-27 08:01,2007-05-27 08:01,,2007-01-27 00:00,2007-01-27 00:00,,,2005-09-16 08:00,2005-11-03 17:00,,,,,PT_Normal,,,,,ibXYNIwXRnekvWL6RQLdsQ,kijgeMx750OYiAa73f95lQ,,,N,0,0,,,2007-02-01 02:43,2007-02-04 01:05,hbe4678,hbe4678,,,0
4362,12460543,14517,6816223,4047,1,100,N,N,N,CP_Drtn,TT_Task,DT_FixedDUR2,RV_OK,TK_Complete,PK02EMD02,02E MD304  106-D Methanator - Prod. V. Data,,,,0,0,0,0,280,0,0,0,,2005-10-19 00:00,2006-06-05 17:00,2007-04-15 08:01,2007-04-15 08:01,,2007-01-27 00:00,2007-01-27 00:00,,,2006-01-30 08:00,2006-03-17 17:00,,,,,PT_Normal,,,,,GCEM+1pTSU6x+KhFsyAynQ,,,,N,0,0,,,2007-02-01 02:43,2007-02-04 01:05,hbe4678,hbe4678,,,0
4363,12460544,14517,6816223,4047,1,100,N,N,N,CP_Drtn,TT_Task,DT_FixedDUR2,RV_OK,TK_Complete,PK02KMD06,02K MD405  115-F Benfield Solution Sump - Prod. V. Data,,,,0,0,0,0,280,0,0,0,,2006-01-30 08:00,2006-01-30 17:00,2007-05-20 08:01,2007-05-20 08:01,,2007-01-27 00:00,2007-01-27 00:00,,,2006-01-30 08:00,2006-03-17 17:00,,,,,PT_Normal,,,,,U1LwWcuGQZ2UfXOqkjyOEQ,,,,N,0,0,,,2007-02-01 02:43,2007-02-04 01:05,hbe4678,hbe4678,,,0
4364,12460545,14517,6816223,4047,1,100,N,N,N,CP_Drtn,TT_Task,DT_FixedDUR2,RV_OK,TK_Complete,PK02JMD03,02J MD302  104-D1 High Temperature Shift Converter - Prod. V. Data,,,,0,0,0,0,280,0,0,0,,2005-11-02 08:00,2006-05-08 00:00,2007-07-09 08:00,2007-07-09 08:00,,2007-01-27 00:00,2007-01-27 00:00,,,2005-11-02 08:00,2005-12-20 17:00,,,,,PT_Normal,,,,,t/6GCxsXSr6e/9p2vMVCEQ,,,,N,0,0,,,2007-02-01 02:43,2007-02-04 01:05,hbe4678,hbe4678,,,0
4365,12460546,14517,6816223,4047,1,100,N,N,N,CP_Drtn,TT_Task,DT_FixedDUR2,RV_OK,TK_Complete,PK02KMF04,02K MF301  114-F Benfield Solution Storage Tank - Fdn. V. Data (Subcontract),,,,0,0,0,0,280,0,0,0,,2006-03-13 08:00,2006-06-16 00:00,2007-05-20 08:01,2007-05-20 08:01,,2007-01-27 00:00,2007-01-27 00:00,,,2006-03-13 08:00,2006-04-28 17:00,,,,,PT_Normal,,,,,ka9HJbFlQseQgHucT3Mt5A,2Q8/12zCKECNedwxSiMg5A,,,N,0,0,,,2007-02-01 02:43,2007-02-04 01:05,hbe4678,hbe4678,,,0
4366,12460547,14517,6816223,4047,1,100,N,N,N,CP_Drtn,TT_Task,DT_FixedDUR2,RV_OK,TK_Complete,PK02DMD02,02D MD404  107-F Ammonia Letdown Drum - Prod. V. Data,,,,0,0,0,0,280,0,0,0,,2006-01-30 08:00,2006-01-30 17:00,2007-04-24 08:01,2007-04-24 08:01,,2007-01-27 00:00,2007-01-27 00:00,,,2006-01-30 08:00,2006-03-17 17:00,,,,,PT_Normal,,,,,8t9lrRVSTcOltOEPxeTxCA,,,,N,0,0,,,2007-02-01 02:43,2007-02-04 01:05,hbe4678,hbe4678,,,0
4367,12460548,14517,6816223,4047,1,100,N,N,N,CP_Drtn,TT_Task,DT_FixedDUR2,RV_OK,TK_Complete,PK02AMD01,02A MD202  103-E LP Ammonia Scrubber - Prod. V. Data,,,,0,0,0,0,280,0,0,0,,2005-12-13 08:00,2006-01-30 17:00,2007-05-27 08:01,2007-05-27 08:01,,2007-01-27 00:00,2007-01-27 00:00,,,2005-09-16 08:00,2005-11-03 17:00,,,,,PT_Normal,,,,,rtSwiqYMT1e054xMhgTh5g,,,,N,0,0,,,2007-02-01 02:43,2007-02-04 01:05,hbe4678,hbe4678,,,0
4368,12460549,14517,6816223,4047,1,100,N,N,N,CP_Drtn,TT_Task,DT_FixedDUR2,RV_OK,TK_Complete,PK02AMD02,02A MD202  104-E HP Ammonia Scrubber - Prod. V. Data,,,,0,0,0,0,280,0,0,0,,2005-12-13 08:00,2006-01-30 17:00,2007-05-27 08:01,2007-05-27 08:01,,2007-01-27 00:00,2007-01-27 00:00,,,2005-09-16 08:00,2005-11-03 17:00,,,,,PT_Normal,,,,,1l9rUQn5S6G4gGt0rmnT6A,,,,N,0,0,,,2007-02-01 02:43,2007-02-04 01:05,hbe4678,hbe4678,,,0
4369,12460550,14517,6816223,4047,1,100,N,N,N,CP_Drtn,TT_Task,DT_FixedDUR2,RV_OK,TK_Complete,PK02AMD03,02A MD202  105-E Ammonia Distillation Column - Prod. V. Data,,,,0,0,0,0,280,0,0,0,,2005-12-13 08:00,2006-01-30 17:00,2007-05-27 08:01,2007-05-27 08:01,,2007-01-27 00:00,2007-01-27 00:00,,,2005-09-16 08:00,2005-11-03 17:00,,,,,PT_Normal,,,,,4EszeEiNSXGxLUF4g2n8VQ,,,,N,0,0,,,2007-02-01 02:43,2007-02-04 01:05,hbe4678,hbe4678,,,0
4370,12460551,14517,6816223,4047,1,100,N,N,N,CP_Drtn,TT_Task,DT_FixedDUR2,RV_OK,TK_Complete,PK02JMD04,02J MD302  104-D2 Low Temperature Shift Converter - Prod. V. Data,,,,0,0,0,0,280,0,0,0,,2005-11-02 08:00,2006-05-08 00:00,2007-07-09 08:00,2007-07-09 08:00,,2007-01-27 00:00,2007-01-27 00:00,,,2005-11-02 08:00,2005-12-20 17:00,,,,,PT_Normal,,,,,ZbUcr9XmTsCA4G2fDXig/Q,,,,N,0,0,,,2007-02-01 02:43,2007-02-04 01:05,hbe4678,hbe4678,,,0
4371,12460552,14517,6816223,4047,1,100,N,N,N,CP_Drtn,TT_Task,DT_FixedDUR2,RV_OK,TK_Complete,PK02DMD03,02D MD404  109-F Refrigerant Receiver - Prod. V. Data,,,,0,0,0,0,280,0,0,0,,2006-01-30 08:00,2006-01-30 17:00,2007-04-24 08:01,2007-04-24 08:01,,2007-01-27 00:00,2007-01-27 00:00,,,2006-01-30 08:00,2006-03-17 17:00,,,,,PT_Normal,,,,,tKiI8l4/QwWxXfeY7KikbA,,,,N,0,0,,,2007-02-01 02:43,2007-02-04 01:05,hbe4678,hbe4678,,,0
4372,12460553,14517,6816223,4047,1,100,N,N,N,CP_Drtn,TT_Task,DT_FixedDUR2,RV_OK,TK_Complete,PK02MMD04,02M MD303  122-C1 Ammonia Conv. Bed 1 Interchanger - Prod. V. Data,,,,0,0,0,0,280,0,0,0,,2005-10-26 08:00,2006-05-02 00:00,2007-06-19 08:01,2007-06-19 08:01,,2007-01-27 00:00,2007-01-27 00:00,,,2005-10-26 08:00,2005-12-13 17:00,,,,,PT_Normal,,,,,T4Gl2ZwSRg6d/hYxqzGoOQ,,,,N,0,0,,,2007-02-01 02:43,2007-02-04 01:05,hbe4678,hbe4678,,,0
4373,12460554,14517,6816223,4047,1,100,N,N,N,CP_Drtn,TT_Task,DT_FixedDUR2,RV_OK,TK_Complete,PK02MMD05,02M MD303  122-C2 Ammonia Conv. Bed 2 Interchanger - Prod. V. Data,,,,0,0,0,0,280,0,0,0,,2005-10-26 08:00,2006-05-02 00:00,2007-06-19 08:01,2007-06-19 08:01,,2007-01-27 00:00,2007-01-27 00:00,,,2005-10-26 08:00,2005-12-13 17:00,,,,,PT_Normal,,,,,4iepiOypT22DlR+A5IeGlQ,,,,N,0,0,,,2007-02-01 02:43,2007-02-04 01:05,hbe4678,hbe4678,,,0
4374,12460555,14517,6816223,4047,1,100,N,N,N,CP_Drtn,TT_Task,DT_FixedDUR2,RV_OK,TK_Complete,PK02MMD06,02M MD303  122-C3 Ammonia Conv. Bed 3 Interchanger - Prod. V. Data,,,,0,0,0,0,280,0,0,0,,2005-10-26 08:00,2006-05-02 17:00,2007-06-19 08:01,2007-06-19 08:01,,2007-01-27 00:00,2007-01-27 00:00,,,2005-10-26 08:00,2005-12-13 17:00,,,,,PT_Normal,,,,,3K3LAnRlRRiM2HKq0zpMYQ,,,,N,0,0,,,2007-02-01 02:43,2007-02-04 01:05,hbe4678,hbe4678,,,0
4375,12460556,14517,6816223,4047,1,100,N,N,N,CP_Drtn,TT_Task,DT_FixedDUR2,RV_OK,TK_Complete,PK02MMD11,02M MD402  144-F Feed Gas Knockout Drum - Prod. V. Data,,,,0,0,0,0,280,0,0,0,,2006-01-30 08:00,2006-01-30 17:00,2007-06-19 08:01,2007-06-19 08:01,,2007-01-27 00:00,2007-01-27 00:00,,,2006-01-30 08:00,2006-03-17 17:00,,,,,PT_Normal,,,,,xNqxQkzOTYGFncbSewZRyg,,,,N,0,0,,,2007-02-01 02:43,2007-02-04 01:05,hbe4678,hbe4678,,,0
4376,12460557,14517,6816223,4047,1,100,N,N,N,CP_Drtn,TT_Task,DT_FixedDUR2,RV_OK,TK_Complete,PK02MMD12,02M MD305  102-D Mercury Guard - Prod. V. Data,,,,0,0,0,0,280,0,0,0,,2006-03-06 00:00,2006-06-05 17:00,2007-06-19 08:01,2007-06-19 08:01,,2007-01-27 00:00,2007-01-27 00:00,,,2006-02-27 08:00,2006-04-14 17:00,,,,,PT_Normal,,,,,YRjyV+9oT9+MSKGnTnikPw,,,,N,0,0,,,2007-02-01 02:43,2007-02-04 01:05,hbe4678,hbe4678,,,0
4377,12460558,14517,6816223,4047,1,100,N,N,N,CP_Drtn,TT_Task,DT_FixedDUR2,RV_OK,TK_Complete,PK02QMD07,02Q MD401  101-F Steam Drum - Prod. V. Data,,,,0,0,0,0,280,0,0,0,,2005-10-31 00:00,2006-05-03 00:00,2007-05-26 08:01,2007-05-26 08:01,,2007-01-27 00:00,2007-01-27 00:00,,,2006-01-30 08:00,2006-03-17 17:00,,,,,PT_Normal,,,,,woaazdx9TPeojt9285Dl3Q,,,,N,0,0,,,2007-02-01 02:43,2007-02-04 01:05,hbe4678,hbe4678,,,0
4378,12460559,14517,6816223,4047,1,100,N,N,N,CP_Drtn,TT_Task,DT_FixedDUR2,RV_OK,TK_Complete,PK02LMD29,02L MD404  132-F Lean Solution Flash Tank - Prod. V. Data,,,,0,0,0,0,280,0,0,0,,2006-01-30 08:00,2006-01-30 17:00,2007-01-09 08:01,2007-01-09 08:01,,2007-01-27 00:00,2007-01-27 00:00,,,2006-01-30 08:00,2006-03-17 17:00,,,,,PT_Normal,,,,,mEClIOtwRhC6cQV2HwzRxw,,,,N,0,0,,,2007-02-01 02:43,2007-02-04 01:05,hbe4678,hbe4678,,,0
4379,12460560,14517,6816223,4047,1,100,N,N,N,CP_Drtn,TT_Task,DT_FixedDUR2,RV_OK,TK_Complete,PK02MMD02,02M MD303  105-D Ammonia Synthesis Converter - Prod. V. Data,,,,0,0,0,0,280,0,0,0,,2005-10-26 00:00,2006-05-02 00:00,2007-06-19 08:01,2007-06-19 08:01,,2007-01-27 00:00,2007-01-27 00:00,,,2006-01-30 08:00,2006-03-17 17:00,,,,,PT_Normal,,,,,JW7VmZelS7qamnqpI95CWg,,,,N,0,0,,,2007-02-01 02:43,2007-02-04 01:05,hbe4678,hbe4678,,,0
4380,12460561,14517,6816223,4047,1,100,N,N,N,CP_Drtn,TT_Task,DT_FixedDUR2,RV_OK,TK_Complete,PK02KMF05,02K MF301  114-F Benfield Solution Storage Tank - Prod. V. Data (Subcontract),,,,0,0,0,0,280,0,0,0,,2006-03-13 08:00,2006-06-16 00:00,2007-05-20 08:01,2007-05-20 08:01,,2007-01-27 00:00,2007-01-27 00:00,,,2006-03-13 08:00,2006-04-28 17:00,,,,,PT_Normal,,,,,ddvHQd2uT/WfpvH21FKncw,,,,N,0,0,,,2007-02-01 02:43,2007-02-04 01:05,hbe4678,hbe4678,,,0
4381,12460562,14517,6816223,4047,1,100,N,N,N,CP_Drtn,TT_Task,DT_FixedDUR2,RV_OK,TK_Complete,PK02KMD10,02K MD405  118-F Benfield Carbon Filter - Prod. V. Data,,,,0,0,0,0,280,0,0,0,,2006-01-30 08:00,2006-01-30 17:00,2007-05-20 08:01,2007-05-20 08:01,,2007-01-27 00:00,2007-01-27 00:00,,,2006-01-30 08:00,2006-03-17 17:00,,,,,PT_Normal,,,,,7ILkLfE/Tk+K4RGRbwy4hA,,,,N,0,0,,,2007-02-01 02:43,2007-02-04 01:05,hbe4678,hbe4678,,,0
4382,12460563,14517,6816223,4047,1,100,N,N,N,CP_Drtn,TT_Task,DT_FixedDUR2,RV_OK,TK_Complete,PK02KMD11,02K MD202  150-E Process Condensate Stripper - Prod. V. Data,,,,0,0,0,0,280,0,0,0,,2005-12-13 08:00,2006-06-05 17:00,2007-05-20 08:01,2007-05-20 08:01,,2007-01-27 00:00,2007-01-27 00:00,,,2005-09-16 08:00,2005-11-03 17:00,,,,,PT_Normal,,,,,WFHfTl5qR32i4j9BSbu5gQ,,,,N,0,0,,,2007-02-01 02:43,2007-02-04 01:05,hbe4678,hbe4678,,,0
4383,12460564,14517,6816223,4047,1,100,N,N,N,CP_Drtn,TT_Task,DT_FixedDUR2,RV_OK,TK_Complete,PK02LMD01,02L MD201  101-E CO2 Absorber - Prod. V. Data,,,,0,0,0,0,280,0,0,0,,2005-10-17 08:00,2006-05-02 00:00,2007-01-09 08:01,2007-01-09 08:01,,2007-01-27 00:00,2007-01-27 00:00,,,2005-10-17 08:00,2005-12-02 17:00,,,,,PT_Normal,,,,,Dp4RMHPSTL24s/JaFz2CWg,,,,N,0,0,,,2007-02-01 02:43,2007-02-04 01:05,hbe4678,hbe4678,,,0
4384,12460565,14517,6816223,4047,1,100,N,N,N,CP_Drtn,TT_Task,DT_FixedDUR2,RV_OK,TK_Complete,PK02LMD02,02L MD201  102-E CO2 Stripper - Prod. V. Data,,,,0,0,0,0,280,0,0,0,,2005-10-17 08:00,2006-05-02 00:00,2007-01-09 08:01,2007-01-09 08:01,,2007-01-27 00:00,2007-01-27 00:00,,,2005-10-17 08:00,2005-12-02 17:00,,,,,PT_Normal,,,,,QUswTtdnQlewMuW2a19/Lg,,,,N,0,0,,,2007-02-01 02:43,2007-02-04 01:05,hbe4678,hbe4678,,,0
4385,12460566,14517,6816223,4047,1,100,N,N,N,CP_Drtn,TT_Task,DT_FixedDUR2,RV_OK,TK_Complete,PK02LMD03,02L MD402  102-F1 Raw Gas Separator - Prod. V. Data,,,,0,0,0,0,280,0,0,0,,2006-01-30 08:00,2006-01-30 17:00,2007-01-09 08:01,2007-01-09 08:01,,2007-01-27 00:00,2007-01-27 00:00,,,2006-01-30 08:00,2006-03-17 17:00,,,,,PT_Normal,,,,,xBiLjiRjTYGRxzE2F6WjWA,,,,N,0,0,,,2007-02-01 02:43,2007-02-04 01:05,hbe4678,hbe4678,,,0
4386,12460567,14517,6816223,4047,1,100,N,N,N,CP_Drtn,TT_Task,DT_FixedDUR2,RV_OK,TK_Complete,PK02LMD04,02L MD402  102-F2 CO2 Absorber O/H KO Drum - Prod. V. Data,,,,0,0,0,0,280,0,0,0,,2006-01-30 08:00,2006-01-30 17:00,2007-01-09 08:01,2007-01-09 08:01,,2007-01-27 00:00,2007-01-27 00:00,,,2006-01-30 08:00,2006-03-17 17:00,,,,,PT_Normal,,,,,/OXpiVn+SQ6U2YNGDBy4kA,,,,N,0,0,,,2007-02-01 02:43,2007-02-04 01:05,hbe4678,hbe4678,,,0
4387,12460568,14517,6816223,4047,1,100,N,N,N,CP_Drtn,TT_Task,DT_FixedDUR2,RV_OK,TK_Complete,PK02LMD05,02L MD406  103-F CO2 Stripper Cond. KO Drum - Prod. V. Data,,,,0,0,0,0,280,0,0,0,,2006-01-30 08:00,2006-01-30 17:00,2007-01-09 08:01,2007-01-09 08:01,,2007-01-27 00:00,2007-01-27 00:00,,,2006-01-30 08:00,2006-03-17 17:00,,,,,PT_Normal,,,,,0d3FMF8MR3C8SxLPsanF2Q,,,,N,0,0,,,2007-02-01 02:43,2007-02-04 01:05,hbe4678,hbe4678,,,0
4388,12460569,14517,6816223,4047,1,100,N,N,N,CP_Drtn,TT_Task,DT_FixedDUR2,RV_OK,TK_Complete,PK02EMD01,02E MD402  104-F Syn Gas Comp. Suction Drum - Prod. V. Data,,,,0,0,0,0,280,0,0,0,,2006-01-30 08:00,2006-01-30 17:00,2007-04-15 08:01,2007-04-15 08:01,,2007-01-27 00:00,2007-01-27 00:00,,,2006-01-30 08:00,2006-03-17 17:00,,,,,PT_Normal,,,,,CQp4e6LDTW+Rha8Rs/ZcTA,,,,N,0,0,,,2007-02-01 02:43,2007-02-04 01:05,hbe4678,hbe4678,,,0
4389,12460570,14517,6816223,4047,1,100,N,N,N,CP_Drtn,TT_Task,DT_FixedDUR2,RV_OK,TK_Complete,PK02EMD03,02E MD304  109-DA Molecular Sieve Dryer - Prod. V. Data,,,,0,0,0,0,280,0,0,0,,2006-04-17 08:00,2006-06-05 17:00,2007-04-15 08:01,2007-04-15 08:01,,2007-01-27 00:00,2007-01-27 00:00,,,2006-04-17 08:00,2006-06-02 17:00,,,,,PT_Normal,,,,,1nIsejoVT5CKkdXWyyJtrg,,,,N,0,0,,,2007-02-01 02:43,2007-02-04 01:05,hbe4678,hbe4678,,,0
4390,12460571,14517,6816223,4047,1,100,N,N,N,CP_Drtn,TT_Task,DT_FixedDUR2,RV_OK,TK_Complete,PK02EMD04,02E MD304  109-DB Molecular Sieve Dryer - Prod. V. Data,,,,0,0,0,0,280,0,0,0,,2006-04-17 08:00,2006-06-05 17:00,2007-04-15 08:01,2007-04-15 08:01,,2007-01-27 00:00,2007-01-27 00:00,,,2006-04-17 08:00,2006-06-02 17:00,,,,,PT_Normal,,,,,I6D3HwmMSI2+MqvC0voEdg,,,,N,0,0,,,2007-02-01 02:43,2007-02-04 01:05,hbe4678,hbe4678,,,0
4391,12460572,14517,6816223,4047,1,100,N,N,N,CP_Drtn,TT_Task,DT_FixedDUR2,RV_OK,TK_Complete,PK02EMD08,02E MD405  157-F Mol Sieve Regen HP Condensate Drum - Prod. V. Data,,,,0,0,0,0,280,0,0,0,,2006-01-30 08:00,2006-01-30 17:00,2007-04-15 08:01,2007-04-15 08:01,,2007-01-27 00:00,2007-01-27 00:00,,,2006-01-30 08:00,2006-03-17 17:00,,,,,PT_Normal,,,,,BCPgncdASKSn8L5mQAoV9Q,,,,N,0,0,,,2007-02-01 02:43,2007-02-04 01:05,hbe4678,hbe4678,,,0
4392,12460573,14517,6816223,4047,1,100,N,N,N,CP_Drtn,TT_Task,DT_FixedDUR2,RV_OK,TK_Complete,PK02DMD01,02D MD403  106-F Ammonia Separator - Prod. V. Data,,,,0,0,0,0,280,0,0,0,,2006-01-30 08:00,2006-06-05 17:00,2007-12-09 08:01,2007-12-09 08:01,,2007-01-27 00:00,2007-01-27 00:00,,,2006-01-30 08:00,2006-03-17 17:00,,,,,PT_Normal,,,,,jNp7GAOOT+O7LR+Esi2lyA,,,,N,0,0,,,2007-02-01 02:43,2007-02-04 01:05,hbe4678,hbe4678,,,0
4393,12460574,14517,6816224,4047,1,100,N,N,N,CP_Drtn,TT_Task,DT_FixedDUR2,RV_OK,TK_Complete,PK02CMJV03,02C MJ202 103-J/105-J - Civil Prod. V. Data,,,,0,0,0,0,280,0,0,0,,2006-01-30 08:00,2006-01-31 17:00,2007-08-07 08:01,2007-08-07 08:01,,2007-01-27 00:00,2007-01-27 00:00,,,2006-01-30 08:00,2006-03-17 17:00,,,,,PT_Normal,,,,,LSL5JKQsRHKuJhk/9l0wnw,/saY7N2CYESAxx0D5RcGMQ,,,N,0,0,,,2007-02-01 02:43,2007-02-04 01:05,hbe4678,hbe4678,,,0
4394,12460575,14517,6816224,4047,1,100,N,N,N,CP_Drtn,TT_Task,DT_FixedDUR2,RV_OK,TK_Complete,PK02CMJV05,02C MJ202 103-J/105-J - E&I Prod. V. Data,,,,0,0,0,0,280,0,0,0,,2006-01-30 08:00,2006-05-25 00:00,2009-02-13 17:00,2009-02-13 17:00,,2007-01-27 00:00,2007-01-27 00:00,,,2006-01-30 08:00,2006-03-17 17:00,,,,,PT_Normal,,,,,aK3Mf8zlRcCyT7RHF6Unzw,h9pSnEVwaUykJwAJ8wRSYw,,,N,0,0,,,2007-02-01 02:43,2007-02-04 01:05,hbe4678,hbe4678,,,0
4395,12460576,14517,6816224,4047,1,100,N,N,N,CP_Drtn,TT_Task,DT_FixedDUR2,RV_OK,TK_Complete,PK02GMJV01,02G MJ202  102-J - Civil Prod. V. Data,,,,0,0,0,0,280,0,0,0,,2006-01-30 08:00,2006-01-30 17:00,2007-07-02 08:01,2007-07-02 08:01,,2007-01-27 00:00,2007-01-27 00:00,,,2006-01-30 08:00,2006-03-17 17:00,,,,,PT_Normal,,,,,DtjAfxoCTfuuxLB4wSGkPA,x3qlveFZc0K0VUtIo2edow,,,N,0,0,,,2007-02-01 02:43,2007-02-04 01:05,hbe4678,hbe4678,,,0
4396,12460577,14517,6816224,4047,1,100,N,N,N,CP_Drtn,TT_Task,DT_FixedDUR2,RV_OK,TK_Complete,PK02GMJV02,02G MJ202  102-J - Piping Prod. V. Data,,,,0,0,0,0,280,0,0,0,,2006-01-30 08:00,2006-04-21 00:00,2007-06-07 08:01,2007-06-07 08:01,,2007-01-27 00:00,2007-01-27 00:00,,,2006-01-30 08:00,2006-03-17 17:00,,,,,PT_Normal,,,,,sswMTGTBRLWHZ3ic6zyldQ,x3qlveFZc0K0VUtIo2edow,,,N,0,0,,,2007-02-01 02:43,2007-02-04 01:05,hbe4678,hbe4678,,,0
4397,12460578,14517,6816224,4047,1,100,N,N,N,CP_Drtn,TT_Task,DT_FixedDUR2,RV_OK,TK_Complete,PK02GMJV03,02G MJ202  102/3/5-J - E&I Prod. V. Data,,,,0,0,0,0,280,0,0,0,,2006-01-30 08:00,2006-08-15 17:00,2009-02-13 17:00,2009-02-13 17:00,,2007-01-27 00:00,2007-01-27 00:00,,,2006-01-30 08:00,2006-03-17 17:00,,,,,PT_Normal,,,,,XA97YBjbSt+X4v+wR1+4ew,xLIdYlImnUOLj4L7Zvy6Aw,,,N,0,0,,,2007-02-01 02:43,2007-02-04 01:05,hbe4678,hbe4678,,,0
4398,12460579,14517,6816224,4047,1,100,N,N,N,CP_Drtn,TT_Task,DT_FixedDUR2,RV_OK,TK_Complete,PK02FMJV01,02F MJ301  104-J/JA - Piping Prod. V. Data,,,,0,0,0,0,280,0,0,0,,2005-12-21 00:00,2006-05-26 00:00,2007-05-05 08:01,2007-05-05 08:01,,2007-01-27 00:00,2007-01-27 00:00,,,2006-01-30 08:00,2006-03-17 17:00,,,,,PT_Normal,,,,,Rgz0MxDkSaKCUau/Tm0RAw,tPiIFgGXlUm8WjUIHEuyHw,,,N,0,0,,,2007-02-01 02:43,2007-02-04 01:05,hbe4678,hbe4678,,,0
4399,12460580,14517,6816224,4047,1,100,N,N,N,CP_Drtn,TT_Task,DT_FixedDUR2,RV_OK,TK_Complete,PK02FMJV02,02F MJ301  104-J/JA - Civil Prod. V. Data,,,,0,0,0,0,280,0,0,0,,2005-12-21 00:00,2006-06-12 00:00,2007-11-18 08:01,2007-11-18 08:01,,2007-01-27 00:00,2007-01-27 00:00,,,2006-01-30 08:00,2006-03-17 17:00,,,,,PT_Normal,,,,,LjI4sz95S5+PHapPNF8EWQ,tPiIFgGXlUm8WjUIHEuyHw,,,N,0,0,,,2007-02-01 02:43,2007-02-04 01:05,hbe4678,hbe4678,,,0
4400,12460581,14517,6816224,4047,1,100,N,N,N,CP_Drtn,TT_Task,DT_FixedDUR2,RV_OK,TK_Active,PK02FMJV03,02F MJ301  104-J/JA - E&I Prod. V. Data,,4136,0,144,0,0,0,280,0,0,0,,2005-12-21 08:00,,2009-01-21 08:00,2009-02-13 17:00,,2007-01-29 08:00,2007-02-21 17:00,2007-01-29 08:00,2007-02-21 17:00,2005-12-21 08:00,2006-02-07 17:00,,2009-01-21 08:00,2009-02-13 17:00,,PT_Normal,,,,,EKjRzS5FTJq+imS3RL4TQA,U6w741TQxkuQcTKxt8LK+g,,,N,0,0,,,2007-02-01 02:43,2007-02-01 02:43,hbe4678,hbe4678,2007-01-29 08:00,2007-02-21 17:00,144
4401,12460582,14517,6816224,4047,1,100,N,N,N,CP_Drtn,TT_Task,DT_FixedDUR2,RV_OK,TK_Complete,PK02LMJV01,02L MJ302  107-J - Civil Prod. V. Data,,,,0,0,0,0,280,0,0,0,,2006-01-30 08:00,2006-06-07 17:00,2007-03-20 08:01,2007-03-20 08:01,,2007-01-27 00:00,2007-01-27 00:00,,,2006-01-30 08:00,2006-03-17 17:00,,,,,PT_Normal,,,,,zBHPlmtiRAKjrZqXV1B++Q,nRVM9PBvu0iKhfzMEOWjVQ,,,N,0,0,,,2007-02-01 02:43,2007-02-04 01:05,hbe4678,hbe4678,,,0
4402,12460583,14517,6816224,4047,1,100,N,N,N,CP_Drtn,TT_Task,DT_FixedDUR2,RV_OK,TK_Complete,PK02LMJV02,02L MJ302  107-J - Piping Prod. V. Data,,,,0,0,0,0,280,0,0,0,,2006-01-30 08:00,2006-06-12 17:00,2007-01-09 08:01,2007-01-09 08:01,,2007-01-27 00:00,2007-01-27 00:00,,,2006-01-30 08:00,2006-03-17 17:00,,,,,PT_Normal,,,,,APokqNMOTG2nCfXw8vlVZg,nRVM9PBvu0iKhfzMEOWjVQ,,,N,0,0,,,2007-02-01 02:43,2007-02-04 01:05,hbe4678,hbe4678,,,0
4403,12460584,14517,6816224,4047,1,100,N,N,N,CP_Drtn,TT_Task,DT_FixedDUR2,RV_OK,TK_Complete,PK02LMJV03,02L MJ302  107-J - E&I Prod. V. Data,,,,0,0,0,0,280,0,0,0,,2006-01-30 08:00,2006-11-03 17:00,2009-02-13 17:00,2009-02-13 17:00,,2007-01-27 00:00,2007-01-27 00:00,,,2006-01-30 08:00,2006-03-17 17:00,,,,,PT_Normal,,,,,0RuzFl5SR/adZEv7deWQng,zZ7DHLIWg0SBU5u040e2FQ,,,N,0,0,,,2007-02-01 02:43,2007-02-04 01:05,hbe4678,hbe4678,,,0
4404,12460585,14517,6816224,4047,1,100,N,N,N,CP_Drtn,TT_Task,DT_FixedDUR2,RV_OK,TK_Complete,PK02FMJV04,02F MJ304  2003-J/JA - Civil Prod. V. Data,,,,0,0,0,0,280,0,0,0,,2006-01-30 08:00,2006-01-30 17:00,2007-11-18 08:01,2007-11-18 08:01,,2007-01-27 00:00,2007-01-27 00:00,,,2006-01-30 08:00,2006-03-17 17:00,,,,,PT_Normal,,,,,kLKVhueUSyGVErJZLf0mzQ,6lVA8yKm2U2+3Yq02Z0Ccw,,,N,0,0,,,2007-02-01 02:43,2007-02-04 01:05,hbe4678,hbe4678,,,0
4405,12460586,14517,6816224,4047,1,100,N,N,N,CP_Drtn,TT_Task,DT_FixedDUR2,RV_OK,TK_Complete,PK02FMJV05,02F MJ304  2003-J/JA - Piping Prod. V. Data,,,,0,0,0,0,280,0,0,0,,2006-01-30 08:00,2006-01-30 17:00,2007-05-05 08:01,2007-05-05 08:01,,2007-01-27 00:00,2007-01-27 00:00,,,2006-01-30 08:00,2006-03-17 17:00,,,,,PT_Normal,,,,,NGvRNXHkRaC6HYJBpZXKmw,6lVA8yKm2U2+3Yq02Z0Ccw,,,N,0,0,,,2007-02-01 02:43,2007-02-04 01:05,hbe4678,hbe4678,,,0
4406,12460587,14517,6816224,4047,1,100,N,N,N,CP_Drtn,TT_Task,DT_FixedDUR2,RV_OK,TK_Complete,PK02FMJV06,02F MJ304  2003-J/JA - E&I Prod. V. Data,,,,0,0,0,0,280,0,0,0,,2006-01-30 08:00,2006-01-30 17:00,2009-02-13 17:00,2009-02-13 17:00,,2007-01-27 00:00,2007-01-27 00:00,,,2006-01-30 08:00,2006-03-17 17:00,,,,,PT_Normal,,,,,X/qwkVW2QUCuvUKWKW2/sQ,xY00yzm2fk+Xz0GuSZImPQ,,,N,0,0,,,2007-02-01 02:43,2007-02-04 01:05,hbe4678,hbe4678,,,0
4407,12460588,14517,6816224,4047,1,100,N,N,N,CP_Drtn,TT_Task,DT_FixedDUR2,RV_OK,TK_Complete,PK02KMLV02,02K ML420  115-L - Civil Prod. V. Data,,,,0,0,0,0,280,0,0,0,,2006-01-30 08:00,2006-01-30 17:00,2007-05-20 08:01,2007-05-20 08:01,,2007-01-27 00:00,2007-01-27 00:00,,,2006-01-30 08:00,2006-03-17 17:00,,,,,PT_Normal,,,,,M5AYOeF7TF+uuJPmcBWujQ,bA+HOkvNskee6uBEBQ/jRw,,,N,0,0,,,2007-02-01 02:43,2007-02-04 01:05,hbe4678,hbe4678,,,0
4408,12460589,14517,6816224,4047,1,100,N,N,N,CP_Drtn,TT_Task,DT_FixedDUR2,RV_OK,TK_Complete,PK02KMLV03,02K ML420  115-L - E&I Prod. V. Data,,,,0,0,0,0,280,0,0,0,,2006-01-30 08:00,2006-01-30 17:00,2009-02-13 17:00,2009-02-13 17:00,,2007-01-27 00:00,2007-01-27 00:00,,,2006-01-30 08:00,2006-03-17 17:00,,,,,PT_Normal,,,,,j7LQOcmLTsm2pejV4sPV8A,bA+HOkvNskee6uBEBQ/jRw,,,N,0,0,,,2007-02-01 02:43,2007-02-04 01:05,hbe4678,hbe4678,,,0
4409,12460590,14517,6816224,4047,1,100,N,N,N,CP_Drtn,TT_Task,DT_FixedDUR2,RV_OK,TK_Complete,PK02LMLV01,02L ML420  104-L - Pipe Prod. V. Data,,,,0,0,0,0,280,0,0,0,,2006-01-30 08:00,2006-01-30 17:00,2007-01-09 08:01,2007-01-09 08:01,,2007-01-27 00:00,2007-01-27 00:00,,,2006-01-30 08:00,2006-03-17 17:00,,,,,PT_Normal,,,,,/PdHun0QSCWn9D/C/1/TKw,80M/kDLGIEyPk/hkZ13GuQ,,,N,0,0,,,2007-02-01 02:43,2007-02-04 01:05,hbe4678,hbe4678,,,0
4410,12460591,14517,6816224,4047,1,100,N,N,N,CP_Drtn,TT_Task,DT_FixedDUR2,RV_OK,TK_Complete,PK02LMLV02,02L ML420  104-L - Civil Prod. V. Data,,,,0,0,0,0,280,0,0,0,,2006-01-30 08:00,2006-01-30 17:00,2007-03-20 08:01,2007-03-20 08:01,,2007-01-27 00:00,2007-01-27 00:00,,,2006-01-30 08:00,2006-03-17 17:00,,,,,PT_Normal,,,,,/DuiYZVpSkSFvrhv1yOUaQ,80M/kDLGIEyPk/hkZ13GuQ,,,N,0,0,,,2007-02-01 02:43,2007-02-04 01:05,hbe4678,hbe4678,,,0
4411,12460592,14517,6816224,4047,1,100,N,N,N,CP_Drtn,TT_Task,DT_FixedDUR2,RV_OK,TK_Complete,PK02LMLV03,02L ML420  104-L - E&I Prod. V. Data,,,,0,0,0,0,280,0,0,0,,2006-01-30 08:00,2006-01-30 17:00,2009-02-13 17:00,2009-02-13 17:00,,2007-01-27 00:00,2007-01-27 00:00,,,2006-01-30 08:00,2006-03-17 17:00,,,,,PT_Normal,,,,,EUVwdWnTR0GdoJlQDNMgWg,80M/kDLGIEyPk/hkZ13GuQ,,,N,0,0,,,2007-02-01 02:43,2007-02-04 01:05,hbe4678,hbe4678,,,0
4412,12460593,14517,6816224,4047,1,100,N,N,N,CP_Drtn,TT_Task,DT_FixedDUR2,RV_OK,TK_Complete,PK02GMLV01,02G ML425  101-L - Pipe Prod. V. Data,,,,0,0,0,0,280,0,0,0,,2006-03-27 08:00,2006-05-22 00:00,2007-06-07 08:01,2007-06-07 08:01,,2007-01-27 00:00,2007-01-27 00:00,,,2006-03-27 08:00,2006-05-12 17:00,,,,,PT_Normal,,,,,/yFjkyfHTCyHpa9wRxIVeg,H2rh1sQV9Eaos1neJrjgwg,,,N,0,0,,,2007-02-01 02:43,2007-02-04 01:05,hbe4678,hbe4678,,,0
4413,12460594,14517,6816224,4047,1,100,N,N,N,CP_Drtn,TT_Task,DT_FixedDUR2,RV_OK,TK_Complete,PK02GMLV02,02G ML425  101-L - Civil Prod. V. Data,,,,0,0,0,0,280,0,0,0,,2006-03-27 08:00,2006-06-26 00:00,2007-07-02 08:01,2007-07-02 08:01,,2007-01-27 00:00,2007-01-27 00:00,,,2006-03-27 08:00,2006-05-12 17:00,,,,,PT_Normal,,,,,gSRASl4CRkOepUIpGVKWeA,H2rh1sQV9Eaos1neJrjgwg,,,N,0,0,,,2007-02-01 02:43,2007-02-04 01:05,hbe4678,hbe4678,,,0
4414,12460595,14517,6816224,4047,1,100,N,N,N,CP_Drtn,TT_Task,DT_FixedDUR2,RV_OK,TK_Complete,PK02GMLV03,02G ML425  101-L - E&I Prod. V. Data,,,,0,0,0,0,280,0,0,0,,2006-03-27 08:00,2006-08-01 00:00,2009-02-13 17:00,2009-02-13 17:00,,2007-01-27 00:00,2007-01-27 00:00,,,2006-03-27 08:00,2006-05-12 17:00,,,,,PT_Normal,,,,,VGa3ehOqSfyB/H7nVFiKRA,H2rh1sQV9Eaos1neJrjgwg,,,N,0,0,,,2007-02-01 02:43,2007-02-04 01:05,hbe4678,hbe4678,,,0
4415,12460596,14517,6816224,4047,1,100,N,N,N,CP_Drtn,TT_Task,DT_FixedDUR2,RV_OK,TK_Complete,PK02KMLV04,02K ML430  110-L - Piping Prod. V. Data,,,,0,0,0,0,280,0,0,0,,2006-01-30 08:00,2006-01-30 17:00,2007-06-18 08:00,2007-06-18 08:00,,2007-01-27 00:00,2007-01-27 00:00,,,2006-01-30 08:00,2006-03-17 17:00,,,,,PT_Normal,,,,,lgraPLhjTbaVhb/tHVYWEw,zSX35+snd0OuI15uKXYsDQ,,,N,0,0,,,2007-02-01 02:43,2007-02-04 01:05,hbe4678,hbe4678,,,0
4416,12460597,14517,6816224,4047,1,100,N,N,N,CP_Drtn,TT_Task,DT_FixedDUR2,RV_OK,TK_Complete,PK02KMLV05,02K ML430  110-L - Civil Prod. V. Data,,,,0,0,0,0,280,0,0,0,,2006-01-30 08:00,2006-01-30 17:00,2007-05-20 08:01,2007-05-20 08:01,,2007-01-27 00:00,2007-01-27 00:00,,,2006-01-30 08:00,2006-03-17 17:00,,,,,PT_Normal,,,,,GNAcXAQ5QfSdg70FnHca+A,zSX35+snd0OuI15uKXYsDQ,,,N,0,0,,,2007-02-01 02:43,2007-02-04 01:05,hbe4678,hbe4678,,,0
4417,12460598,14517,6816224,4047,1,100,N,N,N,CP_Drtn,TT_Task,DT_FixedDUR2,RV_OK,TK_Complete,PK02KMLV06,02K ML430  110-L - E&I Prod. V. Data,,,,0,0,0,0,280,0,0,0,,2006-01-30 08:00,2006-01-30 17:00,2009-02-13 17:00,2009-02-13 17:00,,2007-01-27 00:00,2007-01-27 00:00,,,2006-01-30 08:00,2006-03-17 17:00,,,,,PT_Normal,,,,,1JCbyrrOSKm4bfUjrbvHWA,zSX35+snd0OuI15uKXYsDQ,,,N,0,0,,,2007-02-01 02:43,2007-02-04 01:05,hbe4678,hbe4678,,,0
4418,12460599,14517,6816224,4047,1,100,N,N,N,CP_Drtn,TT_Task,DT_FixedDUR2,RV_OK,TK_Complete,PK02AMJV03,"02A MJ340  130-J/JA,131-J/JA - E&I Prod. V. Data",,,,0,0,0,0,280,0,0,0,,2006-02-27 08:00,2006-06-12 17:00,2009-02-13 17:00,2009-02-13 17:00,,2007-01-27 00:00,2007-01-27 00:00,,,2006-02-27 08:00,2006-04-14 17:00,,,,,PT_Normal,,,,,lprxr5yDQCexO5XsLd2zCA,4Z1wjxZsyE+RZchoRVL/CQ,,,N,0,0,,,2007-02-01 02:43,2007-02-04 01:05,hbe4678,hbe4678,,,0
4419,12460600,14517,6816224,4047,1,100,N,N,N,CP_Drtn,TT_Task,DT_FixedDUR2,RV_OK,TK_Complete,PK02AMJV01,"02A MJ340  130-J/JA,131-J/JA - Piping Prod. V. Data",,,,0,0,0,0,280,0,0,0,,2006-02-27 08:00,2006-05-26 00:00,2007-05-27 08:01,2007-05-27 08:01,,2007-01-27 00:00,2007-01-27 00:00,,,2006-02-27 08:00,2006-04-14 17:00,,,,,PT_Normal,,,,,DdMNauydT9aKq8da5TASGQ,TOW1ND2te0SaAImFx7WX2A,,,N,0,0,,,2007-02-01 02:43,2007-02-04 01:05,hbe4678,hbe4678,,,0
4420,12460601,14517,6816224,4047,1,100,N,N,N,CP_Drtn,TT_Task,DT_FixedDUR2,RV_OK,TK_Complete,PK02AMJV02,"02A MJ340  130-J/JA,131-J/JA - Civil Prod. V. Data",,,,0,0,0,0,280,0,0,0,,2006-02-27 08:00,2006-06-12 17:00,2007-09-04 08:01,2007-09-04 08:01,,2007-01-27 00:00,2007-01-27 00:00,,,2006-02-27 08:00,2006-04-14 17:00,,,,,PT_Normal,,,,,WORnoP8eSyGC6mJn0lYuiA,TOW1ND2te0SaAImFx7WX2A,,,N,0,0,,,2007-02-01 02:43,2007-02-04 01:05,hbe4678,hbe4678,,,0
4421,12460602,14517,6816224,4047,1,100,N,N,N,CP_Drtn,TT_Task,DT_FixedDUR2,RV_OK,TK_Complete,PK02BMLV01,02B ML313  160-L - Piping Prod. V. Data,,,,0,0,0,0,280,0,0,0,,2006-01-30 08:00,2006-04-03 00:00,2007-04-01 08:01,2007-04-01 08:01,,2007-01-27 00:00,2007-01-27 00:00,,,2006-01-30 08:00,2006-03-17 17:00,,,,,PT_Normal,,,,,JKmEHwb9RmKSjV3WD/WT4Q,BbmeC0qry0ex1swRFV0RRg,,,N,0,0,,,2007-02-01 02:43,2007-02-04 01:05,hbe4678,hbe4678,,,0
4422,12460603,14517,6816224,4047,1,100,N,N,N,CP_Drtn,TT_Task,DT_FixedDUR2,RV_OK,TK_Complete,PK02BMLV02,02B ML313  160-L - Civil Prod. V. Data,,,,0,0,0,0,280,0,0,0,,2006-01-30 08:00,2006-04-03 00:00,2007-12-04 08:01,2007-12-04 08:01,,2007-01-27 00:00,2007-01-27 00:00,,,2006-01-30 08:00,2006-03-17 17:00,,,,,PT_Normal,,,,,qrVR8laxSRqCUUprOlEuYg,BbmeC0qry0ex1swRFV0RRg,,,N,0,0,,,2007-02-01 02:43,2007-02-04 01:05,hbe4678,hbe4678,,,0
4423,12460604,14517,6816224,4047,1,100,N,N,N,CP_Drtn,TT_Task,DT_FixedDUR2,RV_OK,TK_Complete,PK02BMLV03,02B ML313  160-L - E&I Prod. V. Data,,,,0,0,0,0,280,0,0,0,,2006-01-30 08:00,2006-05-26 00:00,2009-02-13 17:00,2009-02-13 17:00,,2007-01-27 00:00,2007-01-27 00:00,,,2006-01-30 08:00,2006-03-17 17:00,,,,,PT_Normal,,,,,uiVmJjA9S2We+JEfYTDOAQ,BbmeC0qry0ex1swRFV0RRg,,,N,0,0,,,2007-02-01 02:43,2007-02-04 01:05,hbe4678,hbe4678,,,0
4424,12460605,14517,6816224,4047,1,100,N,N,N,CP_Drtn,TT_Task,DT_FixedDUR2,RV_OK,TK_Complete,PK02GMJV06,02G MJ201  101-J - Civil Prod. V. Data,,,,0,0,0,0,280,0,0,0,,2006-01-30 08:00,2006-06-05 17:00,2007-07-02 08:01,2007-07-02 08:01,,2007-01-27 00:00,2007-01-27 00:00,,,2006-01-30 08:00,2006-03-17 17:00,,,,,PT_Normal,,,,,+f2scyOQQLe28abL52Sbyw,bRAk9A6JKUGgC2gNSwDCzg,,,N,0,0,,,2007-02-01 02:43,2007-02-04 01:05,hbe4678,hbe4678,,,0
4425,12460606,14517,6816224,4047,1,100,N,N,N,CP_Drtn,TT_Task,DT_FixedDUR2,RV_OK,TK_Active,PK02GMJV08,02G MJ201  101-J - E&I Prod. V. Data,,4280,0,0,0,0,0,280,0,0,0,,2006-01-30 08:00,,2009-02-13 17:00,2009-02-13 17:00,2006-11-17 17:00,2007-01-29 08:00,2007-01-29 08:00,2007-01-29 08:00,2007-01-29 08:00,2006-01-30 08:00,2006-03-17 17:00,,2009-02-13 17:00,2009-02-13 17:00,,PT_Normal,,,,,yX+BG3OaSxa9Zwox0E3I7Q,Gjmy9jWAGkqUXmP8qOU4HA,,,N,0,0,,,2007-02-01 02:43,2007-02-01 02:43,hbe4678,hbe4678,2007-01-29 08:00,2007-01-29 08:00,0
4426,12460607,14517,6816224,4047,1,100,N,N,N,CP_Drtn,TT_Task,DT_FixedDUR2,RV_OK,TK_Complete,PK02GMJV07,02G MJ201  101-J - Piping Prod. V. Data,,,,0,0,0,0,280,0,0,0,,2006-01-30 08:00,2006-09-18 17:00,2007-06-07 08:01,2007-06-07 08:01,,2007-01-27 00:00,2007-01-27 00:00,,,2006-01-30 08:00,2006-03-17 17:00,,,,,PT_Normal,,,,,U5tgHuyMRwCOenPxTmg6OA,PN1HNCTsFU+SqPWsgwcSfQ,,,N,0,0,,,2007-02-01 02:43,2007-02-04 01:05,hbe4678,hbe4678,,,0
4427,12460608,14517,6816224,4047,1,100,N,N,N,CP_Drtn,TT_Task,DT_FixedDUR2,RV_OK,TK_Complete,PK02CMJV04,02C MJ202  103-J/105-J - Piping Prod. V. Data,,,,0,0,0,0,280,0,0,0,,2006-01-30 08:00,2006-05-26 00:00,2007-05-03 08:01,2007-05-03 08:01,,2007-01-27 00:00,2007-01-27 00:00,,,2006-01-30 08:00,2006-03-17 17:00,,,,,PT_Normal,,,,,ANXiME7cS5GmYW7Z5wBHiw,/saY7N2CYESAxx0D5RcGMQ,,,N,0,0,,,2007-02-01 02:43,2007-02-04 01:05,hbe4678,hbe4678,,,0
4428,12460609,14517,6816224,4047,1,100,N,N,N,CP_Drtn,TT_Task,DT_FixedDUR2,RV_OK,TK_Complete,PK02LMLV06,"02L ML593  132-L1,L2,L3,L4 - E&I Prod. V. Data",,,,0,0,0,0,280,0,0,0,,2006-01-30 08:00,2006-01-30 17:00,2009-02-13 17:00,2009-02-13 17:00,,2007-01-27 00:00,2007-01-27 00:00,,,2006-01-30 08:00,2006-03-17 17:00,,,,,PT_Normal,,,,,nW081g77Tku/Q8cLCA07Eg,8P+y8uRE0k2s5bBlMxF9aQ,,,N,0,0,,,2007-02-01 02:43,2007-02-04 01:05,hbe4678,hbe4678,,,0
4429,12460610,14517,6816224,4047,1,100,N,N,N,CP_Drtn,TT_Task,DT_FixedDUR2,RV_OK,TK_Complete,PK02GMJV05,02G MJ750  101-JTCC Ejector System for 101-JTC - Prod. V. Data,,,,0,0,0,0,280,0,0,0,,2006-01-30 08:00,2006-01-30 17:00,2007-06-07 08:01,2007-06-07 08:01,,2007-01-27 00:00,2007-01-27 00:00,,,2006-01-30 08:00,2006-03-17 17:00,,,,,PT_Normal,,,,,9mTYXq/jR+CabHvzzi4PKg,,,,N,0,0,,,2007-02-01 02:43,2007-02-04 01:05,hbe4678,hbe4678,,,0
4430,12460611,14517,6816224,4047,1,100,N,N,N,CP_Drtn,TT_Task,DT_FixedDUR2,RV_OK,TK_Complete,PK02CMJV06,02C MJ305  112-J/JA - Civil Prod. V. Data,,,,0,0,0,0,280,0,0,0,,2006-01-30 08:00,2006-04-21 00:00,2007-08-07 08:01,2007-08-07 08:01,,2007-01-27 00:00,2007-01-27 00:00,,,2006-01-30 08:00,2006-03-17 17:00,,,,,PT_Normal,,,,,+3vi2kPjQJ6kaW+SQxV7cw,BEW5hxfZ4kus0iEhfZN9qA,,,N,0,0,,,2007-02-01 02:43,2007-02-04 01:05,hbe4678,hbe4678,,,0
4431,12460612,14517,6816224,4047,1,100,N,N,N,CP_Drtn,TT_Task,DT_FixedDUR2,RV_OK,TK_Complete,PK02CMJV07,02C MJ305  112-J/JA - Piping Prod. V. Data,,,,0,0,0,0,280,0,0,0,,2006-01-30 08:00,2006-04-03 00:00,2007-05-03 08:01,2007-05-03 08:01,,2007-01-27 00:00,2007-01-27 00:00,,,2006-01-30 08:00,2006-03-17 17:00,,,,,PT_Normal,,,,,IIQ6bkbSScqFpDrIiUF0sA,BEW5hxfZ4kus0iEhfZN9qA,,,N,0,0,,,2007-02-01 02:43,2007-02-04 01:05,hbe4678,hbe4678,,,0
4432,12460613,14517,6816224,4047,1,100,N,N,N,CP_Drtn,TT_Task,DT_FixedDUR2,RV_OK,TK_Complete,PK02CMJV08,02C MJ305  112-J/JA - E&I Prod. V. Data,,,,0,0,0,0,280,0,0,0,,2006-01-30 08:00,2006-06-30 17:00,2009-02-13 17:00,2009-02-13 17:00,,2007-01-27 00:00,2007-01-27 00:00,,,2006-01-30 08:00,2006-03-17 17:00,,,,,PT_Normal,,,,,EzumDmyrQceUwX8zC/8yJA,e759M4NhHkqCkKKjrGj5og,,,N,0,0,,,2007-02-01 02:43,2007-02-04 01:05,hbe4678,hbe4678,,,0
4433,12460614,14517,6816224,4047,1,100,N,N,N,CP_Drtn,TT_Task,DT_FixedDUR2,RV_OK,TK_Complete,PK02DMJV01,"02D MJ305  120-J/JA, 124-J/JA - Civil Prod. V. Data",,,,0,0,0,0,280,0,0,0,,2006-01-30 08:00,2006-04-21 00:00,2007-12-09 08:01,2007-12-09 08:01,,2007-01-27 00:00,2007-01-27 00:00,,,2006-01-30 08:00,2006-03-17 17:00,,,,,PT_Normal,,,,,GIGfjbIMRyyhyKWuKt9FZA,L9TjdV+yaUm2r0cbhAH+pg,,,N,0,0,,,2007-02-01 02:43,2007-02-04 01:05,hbe4678,hbe4678,,,0
4434,12460615,14517,6816224,4047,1,100,N,N,N,CP_Drtn,TT_Task,DT_FixedDUR2,RV_OK,TK_Complete,PK02DMJV02,"02D MJ305  120-J/JA, 124-J/JA - Piping Prod. V. Data",,,,0,0,0,0,280,0,0,0,,2006-01-30 08:00,2006-04-03 00:00,2007-04-24 08:01,2007-04-24 08:01,,2007-01-27 00:00,2007-01-27 00:00,,,2006-01-30 08:00,2006-03-17 17:00,,,,,PT_Normal,,,,,XiOlG5tQSBqgtAaHRa+0hw,L9TjdV+yaUm2r0cbhAH+pg,,,N,0,0,,,2007-02-01 02:43,2007-02-04 01:05,hbe4678,hbe4678,,,0
4435,12460616,14517,6816224,4047,1,100,N,N,N,CP_Drtn,TT_Task,DT_FixedDUR2,RV_OK,TK_Complete,PK02DMJV03,"02D MJ305  120-J/JA, 124-J/JA - E&I Prod. V. Data",,,,0,0,0,0,280,0,0,0,,2006-01-30 08:00,2006-06-07 00:00,2009-02-13 17:00,2009-02-13 17:00,,2007-01-27 00:00,2007-01-27 00:00,,,2006-01-30 08:00,2006-03-17 17:00,,,,,PT_Normal,,,,,bi4gpfojTbupAfdB78r/nw,Am0VuNKbek+QsoleOiUamg,,,N,0,0,,,2007-02-01 02:43,2007-02-04 01:05,hbe4678,hbe4678,,,0
4436,12460617,14517,6816224,4047,1,100,N,N,N,CP_Drtn,TT_Task,DT_FixedDUR2,RV_OK,TK_Complete,PK02GMJV09,02G MJ305  113-J/JA - Civil Prod. V. Data,,,,0,0,0,0,280,0,0,0,,2006-01-30 08:00,2006-04-21 00:00,2007-07-02 08:01,2007-07-02 08:01,,2007-01-27 00:00,2007-01-27 00:00,,,2006-01-30 08:00,2006-03-17 17:00,,,,,PT_Normal,,,,,WWrQN6THS+G2cXMH7/JI6A,MrmGR3aQwU25LxEFj3zMuA,,,N,0,0,,,2007-02-01 02:43,2007-02-04 01:05,hbe4678,hbe4678,,,0
4437,12460618,14517,6816224,4047,1,100,N,N,N,CP_Drtn,TT_Task,DT_FixedDUR2,RV_OK,TK_Complete,PK02GMJV10,02G MJ305  113-J/JA - Piping Prod. V. Data,,,,0,0,0,0,280,0,0,0,,2006-01-30 08:00,2006-04-03 00:00,2007-06-07 08:01,2007-06-07 08:01,,2007-01-27 00:00,2007-01-27 00:00,,,2006-01-30 08:00,2006-03-17 17:00,,,,,PT_Normal,,,,,zLyCmgRaRp6D8qH84uSR6w,MrmGR3aQwU25LxEFj3zMuA,,,N,0,0,,,2007-02-01 02:43,2007-02-04 01:05,hbe4678,hbe4678,,,0
4438,12460619,14517,6816224,4047,1,100,N,N,N,CP_Drtn,TT_Task,DT_FixedDUR2,RV_OK,TK_Complete,PK02GMJV11,02G MJ305  113-J/JA - E&I Prod. V. Data,,,,0,0,0,0,280,0,0,0,,2006-01-30 08:00,2006-08-14 00:00,2009-02-13 17:00,2009-02-13 17:00,,2007-01-27 00:00,2007-01-27 00:00,,,2006-01-30 08:00,2006-03-17 17:00,,,,,PT_Normal,,,,,YBXWSC6vRJ+VTElckspxEw,mx6228j4P0ioH7eL2SnG1A,,,N,0,0,,,2007-02-01 02:43,2007-02-04 01:05,hbe4678,hbe4678,,,0
4439,12460620,14517,6816224,4047,1,100,N,N,N,CP_Drtn,TT_Task,DT_FixedDUR2,RV_OK,TK_Complete,PK02KMJV01,"02K MJ305  111-J,115-J - Civil Prod. V. Data",,,,0,0,0,0,280,0,0,0,,2006-01-30 08:00,2006-04-21 00:00,2007-05-20 08:01,2007-05-20 08:01,,2007-01-27 00:00,2007-01-27 00:00,,,2006-01-30 08:00,2006-03-17 17:00,,,,,PT_Normal,,,,,4m7H1LRNSZ+Ww7d5rAtdfA,W91oV6VwaEiuP0oe/tz/6A,,,N,0,0,,,2007-02-01 02:43,2007-02-04 01:05,hbe4678,hbe4678,,,0
4440,12460621,14517,6816224,4047,1,100,N,N,N,CP_Drtn,TT_Task,DT_FixedDUR2,RV_OK,TK_Complete,PK02KMJV02,"02K MJ305  111-J,115-J - Piping Prod. V. Data",,,,0,0,0,0,280,0,0,0,,2006-01-30 08:00,2006-04-03 00:00,2007-05-20 08:01,2007-05-20 08:01,,2007-01-27 00:00,2007-01-27 00:00,,,2006-01-30 08:00,2006-03-17 17:00,,,,,PT_Normal,,,,,BYuSfMB/RWG02x57lFgh3w,W91oV6VwaEiuP0oe/tz/6A,,,N,0,0,,,2007-02-01 02:43,2007-02-04 01:05,hbe4678,hbe4678,,,0
4441,12460622,14517,6816224,4047,1,100,N,N,N,CP_Drtn,TT_Task,DT_FixedDUR2,RV_OK,TK_Complete,PK02KMJV03,"02K MJ305  111-J,115-J - E&I Prod. V. Data",,,,0,0,0,0,280,0,0,0,,2006-01-30 08:00,2006-06-07 00:00,2007-05-20 08:01,2007-05-20 08:01,,2007-01-27 00:00,2007-01-27 00:00,,,2006-01-30 08:00,2006-03-17 17:00,,,,,PT_Normal,,,,,McakqnhHRuGi9V26eYLFPw,NCNbpB0E5E63eJqlNyHl1w,,,N,0,0,,,2007-02-01 02:43,2007-02-04 01:05,hbe4678,hbe4678,,,0
4442,12460623,14517,6816224,4047,1,100,N,N,N,CP_Drtn,TT_Task,DT_FixedDUR2,RV_OK,TK_Complete,PK02LMJV04,"02L MJ305  116-J/JA,121-J/JA - Piping Prod. V. Data",,,,0,0,0,0,280,0,0,0,,2006-01-30 08:00,2006-04-03 00:00,2007-01-09 08:01,2007-01-09 08:01,,2007-01-27 00:00,2007-01-27 00:00,,,2006-01-30 08:00,2006-03-17 17:00,,,,,PT_Normal,,,,,Gnho4dhuSPGb6PfPvJ1xwg,CsIJ5/IBBk6W1aCZiE41Pg,,,N,0,0,,,2007-02-01 02:43,2007-02-04 01:05,hbe4678,hbe4678,,,0
4443,12460624,14517,6816224,4047,1,100,N,N,N,CP_Drtn,TT_Task,DT_FixedDUR2,RV_OK,TK_Complete,PK02LMJV05,"02L MJ305  116-J/JA,121-J/JA - Civil Prod. V. Data",,,,0,0,0,0,280,0,0,0,,2006-01-30 08:00,2006-04-20 00:00,2007-03-20 08:01,2007-03-20 08:01,,2007-01-27 00:00,2007-01-27 00:00,,,2006-01-30 08:00,2006-03-17 17:00,,,,,PT_Normal,,,,,kc77isa7Rw+D7TLuisJWcQ,CsIJ5/IBBk6W1aCZiE41Pg,,,N,0,0,,,2007-02-01 02:43,2007-02-04 01:05,hbe4678,hbe4678,,,0
4444,12460625,14517,6816224,4047,1,100,N,N,N,CP_Drtn,TT_Task,DT_FixedDUR2,RV_OK,TK_Complete,PK02LMJV06,"02L MJ305  116-J/JA,121-J/JA - E&I Prod. V. Data",,,,0,0,0,0,280,0,0,0,,2006-01-30 08:00,2006-06-07 00:00,2009-02-13 17:00,2009-02-13 17:00,,2007-01-27 00:00,2007-01-27 00:00,,,2006-01-30 08:00,2006-03-17 17:00,,,,,PT_Normal,,,,,Myc+r/IOROyqk6DcihZHZw,H5hHboxlzkulklLKCejuPg,,,N,0,0,,,2007-02-01 02:43,2007-02-04 01:05,hbe4678,hbe4678,,,0
4445,12460626,14517,6816224,4047,1,100,N,N,N,CP_Drtn,TT_Task,DT_FixedDUR2,RV_OK,TK_Complete,PK02GMLV04,02G MU225  2104-L - Piping Prod. V. Data,,,,0,0,0,0,280,0,0,0,,2006-05-29 08:00,2006-08-14 17:00,2007-06-07 08:01,2007-06-07 08:01,,2007-01-27 00:00,2007-01-27 00:00,,,2006-05-29 08:00,2006-07-14 17:00,,,,,PT_Normal,,,,,xklJJRgfRp2ourRdVP/LPQ,13TcBTneMUybjOn3h0zqsw,,,N,0,0,,,2007-02-01 02:43,2007-02-04 01:05,hbe4678,hbe4678,,,0
4446,12460627,14517,6816224,4047,1,100,N,N,N,CP_Drtn,TT_Task,DT_FixedDUR2,RV_OK,TK_Complete,PK02GMLV05,02G MU225  2104-L - Civil Prod. V. Data,,,,0,0,0,0,280,0,0,0,,2006-05-29 08:00,2006-08-14 17:00,2007-07-02 08:01,2007-07-02 08:01,,2007-01-27 00:00,2007-01-27 00:00,,,2006-05-29 08:00,2006-07-14 17:00,,,,,PT_Normal,,,,,2D8cQqsOS8S4kYJ+RE/t1g,13TcBTneMUybjOn3h0zqsw,,,N,0,0,,,2007-02-01 02:43,2007-02-04 01:05,hbe4678,hbe4678,,,0
4447,12460628,14517,6816224,4047,1,100,N,N,N,CP_Drtn,TT_Task,DT_FixedDUR2,RV_OK,TK_Complete,PK02GMLV06,02G MU225  2104-L - E&I Prod. V. Data,,,,0,0,0,0,280,0,0,0,,2006-05-29 08:00,2006-08-23 00:00,2009-02-13 17:00,2009-02-13 17:00,,2007-01-27 00:00,2007-01-27 00:00,,,2006-05-29 08:00,2006-07-14 17:00,,,,,PT_Normal,,,,,ceAFrcheTUCfaBQ83quxiw,7+/eovvH00qC2g+myOPVOA,,,N,0,0,,,2007-02-01 02:43,2007-02-04 01:05,hbe4678,hbe4678,,,0
4448,12460629,14517,6816224,4047,1,100,N,N,N,CP_Drtn,TT_Task,DT_FixedDUR2,RV_OK,TK_Complete,PK02KMLV01,02K ML420  115-L - Piping Prod. V. Data,,,,0,0,0,0,280,0,0,0,,2006-01-30 08:00,2006-01-30 17:00,2007-06-18 08:00,2007-06-18 08:00,,2007-01-27 00:00,2007-01-27 00:00,,,2006-01-30 08:00,2006-03-17 17:00,,,,,PT_Normal,,,,,yTxKvSysSW25q3OxOPCNQA,bA+HOkvNskee6uBEBQ/jRw,,,N,0,0,,,2007-02-01 02:43,2007-02-04 01:05,hbe4678,hbe4678,,,0
4449,12460630,14517,6816224,13330,1,100,N,N,N,CP_Units,TT_Task,DT_FixedDUR2,RV_OK,TK_Complete,PK02BML100,02B Recv. Planning V. Data - Special Equip. 160-L,,,,0,0,0,0,8,0,0,0,,2005-10-17 08:00,2005-10-17 17:00,2007-04-01 08:01,2007-04-01 08:01,,2007-01-27 00:00,2007-01-27 00:00,,,2005-10-17 08:00,2005-10-17 17:00,,,,,PT_Normal,,,,,Jujij0AmRjWposMkPXdz6A,FjvRMKUOK0iadN8ZsbHkEx,,,N,0,0,,,2007-02-01 02:43,2007-02-04 01:05,hbe4678,hbe4678,,,0
4450,12460631,14517,6816224,13330,1,100,N,N,N,CP_Units,TT_Task,DT_FixedDUR2,RV_OK,TK_Complete,PK02DMJ154,"02D Recv. Planning V. Data - Pumps 120-J/JA,124-J/JA",,,,0,0,0,0,40,0,0,0,,2005-12-02 00:00,2005-12-16 00:00,2007-04-24 08:01,2007-04-24 08:01,,2007-01-27 00:00,2007-01-27 00:00,,,2005-12-30 08:00,2006-01-06 17:00,,,,,PT_Normal,,,,,wzDmRimvRZ2XLRO7V/PctQ,MN/JVeN62kW749mKfhGIux,,,N,0,0,,,2007-02-01 02:43,2007-02-04 01:05,hbe4678,hbe4678,,,0
4451,12460632,14517,6816224,13330,1,100,N,N,N,CP_Units,TT_Task,DT_FixedDUR2,RV_OK,TK_Complete,PK02FMJ154,02F Recv. Planning V. Data - Pumps 104-J/JA,,,,0,0,0,0,8,0,0,0,,2005-12-02 00:00,2005-12-16 00:00,2007-05-05 08:01,2007-05-05 08:01,,2007-01-27 00:00,2007-01-27 00:00,,,2005-12-27 08:00,2005-12-27 17:00,,,,,PT_Normal,,,,,V7Vldk87Ty+d0lvxEPGcbQ,67GQVfQDUU+ubYL6rcqsSh,,,N,0,0,,,2007-02-01 02:43,2007-02-04 01:05,hbe4678,hbe4678,,,0
4452,12460633,14517,6816224,13330,1,100,N,N,N,CP_Units,TT_Task,DT_FixedDUR2,RV_OK,TK_Complete,PK02GMJ154,"02G Recv. Planning V. Data - Pumps 101,102-JLJ/JLJA, 113-J/JA, 2104-LJA/B",,,,0,0,0,0,8,0,0,0,,2005-10-31 08:00,2005-11-01 00:00,2007-05-07 08:00,2007-05-07 08:00,,2007-01-27 00:00,2007-01-27 00:00,,,2005-10-31 08:00,2005-10-31 17:00,,,,,PT_Normal,,,,,yhM2kZNJRCqA21ae0b1DxA,PQcZ1P0FOkuBkiqDwYJ/3x,,,N,0,0,,,2007-02-01 02:43,2007-02-04 01:05,hbe4678,hbe4678,,,0
4453,12460634,14517,6816224,13330,1,100,N,N,N,CP_Units,TT_Task,DT_FixedDUR2,RV_OK,TK_Complete,PK02GML100,02G Recv. Planning V. Data - Special Equip. 101-L,,,,0,0,0,0,8,0,0,0,,2005-10-28 00:00,2005-10-28 00:00,2007-05-07 08:00,2007-05-07 08:00,,2007-01-27 00:00,2007-01-27 00:00,,,2006-01-03 08:00,2006-01-03 17:00,,,,,PT_Normal,,,,,pjdBH2QdS/yXJ4fucD2gcA,xhSFw8Tft0K8LdGDIH2yUx,,,N,0,0,,,2007-02-01 02:43,2007-02-04 01:05,hbe4678,hbe4678,,,0
4454,12460635,14517,6816224,13330,1,100,N,N,N,CP_Units,TT_Task,DT_FixedDUR2,RV_OK,TK_Complete,PK02GMJ135,02G Recv. Planning V.Data - Compressors,,,,0,0,0,0,8,0,0,0,,2005-09-09 00:00,2005-09-09 00:00,2007-05-07 08:00,2007-05-07 08:00,,2007-01-27 00:00,2007-01-27 00:00,,,2005-11-14 08:00,2005-11-14 17:00,,,,,PT_Normal,,,,,GN66ElUJTCiU75ZYIwolZw,igMpl2Wf/EeIY6A+nJmL5R,,,N,0,0,,,2007-02-01 02:43,2007-02-04 01:05,hbe4678,hbe4678,,,0
4455,12460636,14517,6816224,13330,1,100,N,N,N,CP_Units,TT_Task,DT_FixedDUR2,RV_OK,TK_Complete,PK02KMJ154,"02K Recv. Planning V. Data - Pumps 111-J, 115-J",,,,0,0,0,0,8,0,0,0,,2005-10-31 08:00,2005-10-31 17:00,2007-06-18 08:00,2007-06-18 08:00,,2007-01-27 00:00,2007-01-27 00:00,,,2005-10-31 08:00,2005-10-31 17:00,,,,,PT_Normal,,,,,IoUpC8FORzehQYPM5sl48g,OhHznFVkvkm68mRrEb1Nqh,,,N,0,0,,,2007-02-01 02:43,2007-02-04 01:05,hbe4678,hbe4678,,,0
4456,12460637,14517,6816224,13330,1,100,N,N,N,CP_Units,TT_Task,DT_FixedDUR2,RV_OK,TK_Complete,PK02KML100,"02K Recv. Planning V. Data - Special Equip. 110-L,115-L",,,,0,0,0,0,8,0,0,0,,2005-10-27 00:00,2005-10-27 00:00,2007-05-20 08:01,2007-05-20 08:01,,2007-01-27 00:00,2007-01-27 00:00,,,2005-12-19 08:00,2005-12-19 17:00,,,,,PT_Normal,,,,,Us9ETJLnTyaRxEq+icG/2A,uStHqxqY9E2vDQ//cHcHVh,,,N,0,0,,,2007-02-01 02:43,2007-02-04 01:05,hbe4678,hbe4678,,,0
4457,12460638,14517,6816224,13330,1,100,N,N,N,CP_Units,TT_Task,DT_FixedDUR2,RV_OK,TK_Complete,PK02PMU100,02P Recv. Planning V. Data - Utility Equip. 101-U,,,,0,0,0,0,8,0,0,0,,2005-10-17 08:00,2005-10-17 17:00,2007-05-03 08:01,2007-05-03 08:01,,2007-01-27 00:00,2007-01-27 00:00,,,2005-10-17 08:00,2005-10-17 17:00,,,,,PT_Normal,,,,,Bdd4iaUwRlS3LlK+mx/dtw,jMQTN/Cze0W6NZKRmDGNxR,,,N,0,0,,,2007-02-01 02:43,2007-02-04 01:05,hbe4678,hbe4678,,,0
4458,12460639,14517,6816224,13330,1,100,N,N,N,CP_Units,TT_Task,DT_FixedDUR2,RV_OK,TK_Complete,PK02GMJ156,02G Recv. Planning V. Data - Surf. Cond. 101/4-JTC,,,,0,0,0,0,8,0,0,0,,2005-10-17 08:00,2005-10-17 17:00,2007-05-07 08:00,2007-05-07 08:00,,2007-01-27 00:00,2007-01-27 00:00,,,2005-10-17 08:00,2005-10-17 17:00,,,,,PT_Normal,,,,,TFmibp2MTjOcnLaabT4NOw,6IeC8hO5mkeNL+O3uApIoh,,,N,0,0,,,2007-02-01 02:43,2007-02-04 01:05,hbe4678,hbe4678,,,0
4459,12460640,14517,6816224,4047,1,100,N,N,N,CP_Drtn,TT_Task,DT_FixedDUR2,RV_OK,TK_Complete,PK02PMUV01,02P MU350  101-U - Piping Prod. V. Data,,,,0,0,0,0,280,0,0,0,,2006-01-30 08:00,2006-01-30 17:00,2007-05-03 08:01,2007-05-03 08:01,,2007-01-27 00:00,2007-01-27 00:00,,,2006-01-30 08:00,2006-03-17 17:00,,,,,PT_Normal,,,,,TiBrPZ2vSki3Og40NVA5AQ,WwZmZ2Oi70WzMdEecuJZ5Q,,,N,0,0,,,2007-02-01 02:43,2007-02-04 01:05,hbe4678,hbe4678,,,0
4460,12460641,14517,6816224,4047,1,100,N,N,N,CP_Drtn,TT_Task,DT_FixedDUR2,RV_OK,TK_Complete,PK02PMUV02,02P MU350  101-U - Civil Prod. V. Data,,,,0,0,0,0,280,0,0,0,,2006-01-30 08:00,2006-01-30 17:00,2007-05-03 08:01,2007-05-03 08:01,,2007-01-27 00:00,2007-01-27 00:00,,,2006-01-30 08:00,2006-03-17 17:00,,,,,PT_Normal,,,,,gXPyMFk9SXOTADvCsBxorQ,WwZmZ2Oi70WzMdEecuJZ5Q,,,N,0,0,,,2007-02-01 02:43,2007-02-04 01:05,hbe4678,hbe4678,,,0
4461,12460642,14517,6816224,4047,1,100,N,N,N,CP_Drtn,TT_Task,DT_FixedDUR2,RV_OK,TK_Complete,PK02PMUV03,02P MU350  101-U - E&I Prod. V. Data,,,,0,0,0,0,280,0,0,0,,2006-01-30 08:00,2006-01-30 17:00,2009-02-13 17:00,2009-02-13 17:00,,2007-01-27 00:00,2007-01-27 00:00,,,2006-01-30 08:00,2006-03-17 17:00,,,,,PT_Normal,,,,,OY9izfG6RQmm1vOd0Z49iw,WwZmZ2Oi70WzMdEecuJZ5Q,,,N,0,0,,,2007-02-01 02:43,2007-02-04 01:05,hbe4678,hbe4678,,,0
4462,12460643,14517,6816224,4047,1,100,N,N,N,CP_Drtn,TT_Task,DT_FixedDUR2,RV_OK,TK_Complete,PK02FMUV01,"02F MU310  106-L,108-L - Piping Prod. V. Data",,,,0,0,0,0,280,0,0,0,,2006-02-14 08:00,2006-05-26 00:00,2007-05-05 08:01,2007-05-05 08:01,,2007-01-27 00:00,2007-01-27 00:00,,,2006-02-14 08:00,2006-04-03 17:00,,,,,PT_Normal,,,,,kuqmQIyIQymO86+/SGyqTg,HeivWTHsWUeBcStnLD12AA,,,N,0,0,,,2007-02-01 02:43,2007-02-04 01:05,hbe4678,hbe4678,,,0
4463,12460644,14517,6816224,4047,1,100,N,N,N,CP_Drtn,TT_Task,DT_FixedDUR2,RV_OK,TK_Complete,PK02FMUV02,"02F MU310  106-L,107-L,108-L - Civil Prod. V. Data",,,,0,0,0,0,280,0,0,0,,2006-02-14 08:00,2006-06-26 00:00,2007-11-18 08:01,2007-11-18 08:01,,2007-01-27 00:00,2007-01-27 00:00,,,2006-02-14 08:00,2006-04-03 17:00,,,,,PT_Normal,,,,,mSWw4Q5rT2uIy5vc/l+5/g,HeivWTHsWUeBcStnLD12AA,,,N,0,0,,,2007-02-01 02:43,2007-02-04 01:05,hbe4678,hbe4678,,,0
4464,12460645,14517,6816224,4047,1,100,N,N,N,CP_Drtn,TT_Task,DT_FixedDUR2,RV_OK,TK_Complete,PK02FMUV03,"02F MU310  106-L,107-L,108-L - E&I Prod. V. Data",,,,0,0,0,0,280,0,0,0,,2006-02-14 08:00,2006-06-26 00:00,2009-02-13 17:00,2009-02-13 17:00,,2007-01-27 00:00,2007-01-27 00:00,,,2006-02-14 08:00,2006-04-03 17:00,,,,,PT_Normal,,,,,4AmS9IBdQAemIwtMCr0lRQ,HeivWTHsWUeBcStnLD12AA,,,N,0,0,,,2007-02-01 02:43,2007-02-04 01:05,hbe4678,hbe4678,,,0
4465,12460646,14517,6816224,4047,1,100,N,N,N,CP_Drtn,TT_Task,DT_FixedDUR2,RV_OK,TK_Complete,PK02LMLV07,02L MU310  109-L - Piping Prod. V. Data,,,,0,0,0,0,280,0,0,0,,2006-02-14 00:00,2006-05-26 00:00,2007-01-09 08:01,2007-01-09 08:01,,2007-01-27 00:00,2007-01-27 00:00,,,2006-03-27 08:00,2006-05-12 17:00,,,,,PT_Normal,,,,,1VEKlrG+S/isG+eOxAQAZg,LfhBR0+q402Gy+oreUODhg,,,N,0,0,,,2007-02-01 02:43,2007-02-04 01:05,hbe4678,hbe4678,,,0
4466,12460647,14517,6816224,4047,1,100,N,N,N,CP_Drtn,TT_Task,DT_FixedDUR2,RV_OK,TK_Complete,PK02LMLV08,02L MU310  109-L - Civil Prod. V. Data,,,,0,0,0,0,280,0,0,0,,2006-02-14 08:00,2006-06-26 00:00,2007-03-20 08:01,2007-03-20 08:01,,2007-01-27 00:00,2007-01-27 00:00,,,2006-02-14 08:00,2006-04-03 17:00,,,,,PT_Normal,,,,,5G61YfTDQ+eEmAolSfz9Rw,LfhBR0+q402Gy+oreUODhg,,,N,0,0,,,2007-02-01 02:43,2007-02-04 01:05,hbe4678,hbe4678,,,0
4467,12460648,14517,6816224,4047,1,100,N,N,N,CP_Drtn,TT_Task,DT_FixedDUR2,RV_OK,TK_Complete,PK02LMLV09,02L MU310  109-L - E&I Prod. V. Data,,,,0,0,0,0,280,0,0,0,,2006-02-14 08:00,2006-06-26 00:00,2009-02-13 17:00,2009-02-13 17:00,,2007-01-27 00:00,2007-01-27 00:00,,,2006-02-14 08:00,2006-04-03 17:00,,,,,PT_Normal,,,,,vKljDETxRbubcxkr6Q1UiQ,LfhBR0+q402Gy+oreUODhg,,,N,0,0,,,2007-02-01 02:43,2007-02-04 01:05,hbe4678,hbe4678,,,0
4468,12460649,14517,6816224,4047,1,100,N,N,N,CP_Drtn,TT_Task,DT_FixedDUR2,RV_OK,TK_Complete,PK02LMLV04,"02L ML593  132-L1,L2,L3,L4 - Piping Prod. V. Data",,,,0,0,0,0,280,0,0,0,,2006-01-30 08:00,2006-01-30 17:00,2007-01-09 08:01,2007-01-09 08:01,,2007-01-27 00:00,2007-01-27 00:00,,,2006-01-30 08:00,2006-03-17 17:00,,,,,PT_Normal,,,,,AMJ8oO+gRp+ERTkvfJ4+Bg,8P+y8uRE0k2s5bBlMxF9aQ,,,N,0,0,,,2007-02-01 02:43,2007-02-04 01:05,hbe4678,hbe4678,,,0
4469,12460650,14517,6816224,4047,1,100,N,N,N,CP_Drtn,TT_Task,DT_FixedDUR2,RV_OK,TK_Complete,PK02LMLV05,"02L ML593  132-L1,L2,L3,L4 - Civil Prod. V. Data",,,,0,0,0,0,280,0,0,0,,2006-01-30 08:00,2006-01-30 17:00,2007-03-20 08:01,2007-03-20 08:01,,2007-01-27 00:00,2007-01-27 00:00,,,2006-01-30 08:00,2006-03-17 17:00,,,,,PT_Normal,,,,,QWh26OlUSKGiRIEBiKBPZg,8P+y8uRE0k2s5bBlMxF9aQ,,,N,0,0,,,2007-02-01 02:43,2007-02-04 01:05,hbe4678,hbe4678,,,0
4470,12460651,14517,6816224,4047,1,100,N,N,N,CP_Drtn,TT_Task,DT_FixedDUR2,RV_OK,TK_Complete,PK02GMJV04,02G MJ750  101-JTC Surface Condenser for 101/104-JT - Prod. V. Data,,,,0,0,0,0,280,0,0,0,,2006-01-30 08:00,2006-01-30 17:00,2007-06-07 08:01,2007-06-07 08:01,,2007-01-27 00:00,2007-01-27 00:00,,,2006-01-30 08:00,2006-03-17 17:00,,,,,PT_Normal,,,,,X/ozi6mqQ1qsfhEOxYNm8Q,,,,N,0,0,,,2007-02-01 02:43,2007-02-04 01:05,hbe4678,hbe4678,,,0
4471,12460652,14517,6816224,4047,1,100,N,N,N,CP_Drtn,TT_Task,DT_FixedDUR2,RV_OK,TK_Complete,PK02CMJV01,02C MJ750  103-JTC Surface Condenser for 103-JT - Prod. V. Data,,,,0,0,0,0,280,0,0,0,,2006-01-30 08:00,2006-01-30 17:00,2007-05-03 08:01,2007-05-03 08:01,,2007-01-27 00:00,2007-01-27 00:00,,,2006-01-30 08:00,2006-03-17 17:00,,,,,PT_Normal,,,,,wd+VJsSjTSmX0+fJGPIqFA,,,,N,0,0,,,2007-02-01 02:43,2007-02-04 01:05,hbe4678,hbe4678,,,0
4472,12460653,14517,6816224,4047,1,100,N,N,N,CP_Drtn,TT_Task,DT_FixedDUR2,RV_OK,TK_Complete,PK02CMJV02,02C MJ750  103-JTCC Ejector System for 103-JTC - Prod. V. Data,,,,0,0,0,0,280,0,0,0,,2006-01-30 08:00,2006-01-30 17:00,2007-05-03 08:01,2007-05-03 08:01,,2007-01-27 00:00,2007-01-27 00:00,,,2006-01-30 08:00,2006-03-17 17:00,,,,,PT_Normal,,,,,2HQXOP+DRB6I9Ea7iZPH/Q,,,,N,0,0,,,2007-02-01 02:43,2007-02-04 01:05,hbe4678,hbe4678,,,0
4473,12460654,14517,6816224,13330,1,100,N,N,N,CP_Units,TT_Task,DT_FixedDUR2,RV_OK,TK_Complete,PK02CMJ156,02C Recv. Planning V. Data - Surf. Cond. 103-JTC,,,,0,0,0,0,8,0,0,0,,2005-10-17 08:00,2005-10-17 17:00,2007-05-03 08:01,2007-05-03 08:01,,2007-01-27 00:00,2007-01-27 00:00,,,2005-10-17 08:00,2005-10-17 17:00,,,,,PT_Normal,,,,,HfawZ5ZlTr2LgvYSPSxfWg,,,,N,0,0,,,2007-02-01 02:43,2007-02-04 01:05,hbe4678,hbe4678,,,0
4474,12460655,14517,6816224,13330,1,100,N,N,N,CP_Units,TT_Task,DT_FixedDUR2,RV_OK,TK_Complete,PK02AMJ154,"02A Recv. Planning V. Data - Pumps 130-J/JA, 131-J/JA",,,,0,0,0,0,8,0,0,0,,2006-01-01 00:00,2006-01-06 00:00,2007-05-07 08:00,2007-05-07 08:00,,2007-01-27 00:00,2007-01-27 00:00,,,2006-01-16 08:00,2006-01-16 17:00,,,,,PT_Normal,,,,,VC2i2kUJRYu2qww25MMBBg,sxs7RdJcT02goHw03GFb6h,,,N,0,0,,,2007-02-01 02:43,2007-02-04 01:05,hbe4678,hbe4678,,,0
4475,12460656,14517,6816224,13330,1,100,N,N,N,CP_Units,TT_Task,DT_FixedDUR2,RV_OK,TK_Complete,PK02LMJ154,02L Recv. Planning V. Data - Pumps,,,,0,0,0,0,8,0,0,0,,2005-10-31 08:00,2005-10-31 17:00,2007-01-09 08:01,2007-01-09 08:01,,2007-01-27 00:00,2007-01-27 00:00,,,2005-10-31 08:00,2005-10-31 17:00,,,,,PT_Normal,,,,,ALTSruPFQa+R2hjTWjq2FQ,,,,N,0,0,,,2007-02-01 02:43,2007-02-04 01:05,hbe4678,hbe4678,,,0
4476,12460657,14517,6816224,13330,1,100,N,N,N,CP_Units,TT_Task,DT_FixedDUR2,RV_OK,TK_Complete,PK02LML100,02L Recv. Planning V. Data - Special Equip. 104-L,,,,0,0,0,0,8,0,0,0,,2005-10-28 00:00,2005-10-28 00:00,2007-01-09 08:01,2007-01-09 08:01,,2007-01-27 00:00,2007-01-27 00:00,,,2005-11-08 08:00,2005-11-08 17:00,,,,,PT_Normal,,,,,5NggDghvRIOJZj2ShWZlpA,,,,N,0,0,,,2007-02-01 02:43,2007-02-04 01:05,hbe4678,hbe4678,,,0
4477,12460658,14517,6816224,13330,1,100,N,N,N,CP_Units,TT_Task,DT_FixedDUR2,RV_OK,TK_Complete,PK02CMJ135,02C Recv. Planning V.Data - Compressors,,,,0,0,0,0,8,0,0,0,,2005-09-09 00:00,2005-09-09 00:00,2007-05-03 08:01,2007-05-03 08:01,,2007-01-27 00:00,2007-01-27 00:00,,,2005-11-07 08:00,2005-11-07 17:00,,,,,PT_Normal,,,,,zHBT+ib8SZantK9qMLXNMQ,,,,N,0,0,,,2007-02-01 02:43,2007-02-04 01:05,hbe4678,hbe4678,,,0
4478,12460659,14517,6816224,13330,1,100,N,N,N,CP_Units,TT_Task,DT_FixedDUR2,RV_OK,TK_Complete,PK02CMJ154,02C Recv. Planning V. Data - Pumps 112-J/JA,,,,0,0,0,0,40,0,0,0,,2005-12-02 00:00,2005-12-16 00:00,2007-05-03 08:01,2007-05-03 08:01,,2007-01-27 00:00,2007-01-27 00:00,,,2005-12-30 08:00,2006-01-06 17:00,,,,,PT_Normal,,,,,TVIFgPtNQAyWXDQob+UWFw,,,,N,0,0,,,2007-02-01 02:43,2007-02-04 01:05,hbe4678,hbe4678,,,0
4479,12460660,14517,6816225,13331,1,100,N,N,N,CP_Units,TT_Task,DT_FixedDUR2,RV_OK,TK_Complete,EK02LPI143,02L OP's & Serv. Model Comment Resolution Approval,,,,0,0,0,0,40,0,0,0,,2006-07-28 00:00,2006-07-31 00:00,2007-05-15 08:01,2007-05-15 08:01,,2007-01-27 00:00,2007-01-27 00:00,,,2006-07-31 08:00,2006-08-04 17:00,,,,,PT_Normal,,,,,DnthRtC3Qf6za1YMZAF9mA,Gu1n7f5K8key9f4up6qJCx,,,N,0,0,,,2007-02-01 02:43,2007-02-04 01:05,hbe4678,hbe4678,,,0
4480,12460661,14517,6816225,13331,1,100,N,N,N,CP_Units,TT_Task,DT_FixedDUR2,RV_OK,TK_Complete,EK02PPI144,02P OP's & Serv. Model Comment Resolution Approval,,,,0,0,0,0,16,0,0,0,,2006-05-11 08:00,2006-05-15 17:00,2007-05-03 08:01,2007-05-03 08:01,,2007-01-27 00:00,2007-01-27 00:00,,,2006-05-11 08:00,2006-05-12 17:00,,,,,PT_Normal,,,,,YXPyIj5AS8iLR9HnOOmipw,1rnZA2lf7EyTMImJ3gjmJQ,,,N,0,0,,,2007-02-01 02:43,2007-02-04 01:05,hbe4678,hbe4678,,,0
4481,12460662,14517,6816225,13331,1,100,N,N,N,CP_Units,TT_Task,DT_FixedDUR2,RV_OK,TK_Complete,EK02MPI143,02M OP's & Serv. Model Comment Resolution Approval,,,,0,0,0,0,40,0,0,0,,2006-07-11 08:00,2006-08-21 17:00,2007-08-01 08:01,2007-08-01 08:01,,2007-01-27 00:00,2007-01-27 00:00,,,2006-07-11 08:00,2006-07-17 17:00,,,,,PT_Normal,,,,,SiQwn5tOQZO1WmjjpiUr0Q,aAApwdgvzkiMWaDxC7A/dx,,,N,0,0,,,2007-02-01 02:43,2007-02-04 01:05,hbe4678,hbe4678,,,0
4482,12460663,14517,6816225,13331,1,100,N,N,N,CP_Units,TT_Task,DT_FixedDUR2,RV_OK,TK_Complete,EK2QPI144,02Q OP's & Serv. Model Comment Resolution Approval,,,,0,0,0,0,8,0,0,0,,2006-06-23 00:00,2006-06-26 17:00,2007-05-26 08:01,2007-05-26 08:01,,2007-01-27 00:00,2007-01-27 00:00,,,2006-06-26 08:00,2006-06-26 17:00,,,,,PT_Normal,,,,,y1EzYUN+Q5SEO1mVgP015w,UuUkXXMET0SkqNFuL/iHWg,,,N,0,0,,,2007-02-01 02:43,2007-02-04 01:05,hbe4678,hbe4678,,,0
4483,12460664,14517,6816225,13331,1,100,N,N,N,CP_Units,TT_Task,DT_FixedDUR2,RV_OK,TK_Complete,EK02NPI144,02N OP's & Serv. Model Comment Resolution Approval,,,,0,0,0,0,40,0,0,0,,2006-06-12 08:00,2006-06-13 00:00,2007-05-28 08:01,2007-05-28 08:01,,2007-01-27 00:00,2007-01-27 00:00,,,2006-06-12 08:00,2006-06-16 17:00,,,,,PT_Normal,,,,,nrzd6DxCQlS7VdDQtglyfg,0gqyHUbSqkigSv1lT4hrfA,,,N,0,0,,,2007-02-01 02:43,2007-02-04 01:05,hbe4678,hbe4678,,,0
4484,12460665,14517,6816225,13331,1,100,N,N,N,CP_Units,TT_Task,DT_FixedDUR2,RV_OK,TK_Complete,EK02FPI143,02F OP's & Serv. Model Comment Resolution Approval,,,,0,0,0,0,40,0,0,0,,2006-07-17 08:00,2006-09-07 00:00,2007-05-05 08:01,2007-05-05 08:01,,2007-01-27 00:00,2007-01-27 00:00,,,2006-07-17 08:00,2006-07-21 17:00,,,,,PT_Normal,,,,,BjmTHBUbRLi0J8XHhvhIMA,29MEug7qTkmjUK0YSOH8Gh,,,N,0,0,,,2007-02-01 02:43,2007-02-04 01:05,hbe4678,hbe4678,,,0
4485,12460666,14517,6816225,13331,1,100,N,N,N,CP_Units,TT_Task,DT_FixedDUR2,RV_OK,TK_Complete,EK02EPI143,02E OP's & Serv. Model Comment Resolution Approval,,,,0,0,0,0,40,0,0,0,,2006-07-18 08:00,2006-07-26 00:00,2007-04-15 08:01,2007-04-15 08:01,,2007-01-27 00:00,2007-01-27 00:00,,,2006-07-18 08:00,2006-07-24 17:00,,,,,PT_Normal,,,,,g0h3LNW7Rj+YPaNc7W+lBA,y/af05fQPU28j+Ver63iCB,,,N,0,0,,,2007-02-01 02:43,2007-02-04 01:05,hbe4678,hbe4678,,,0
4486,12460667,14517,6816225,13331,1,100,N,N,N,CP_Units,TT_Task,DT_FixedDUR2,RV_OK,TK_Complete,EK02DPI143,02D OP's & Serv. Model Comment Resolution Approval,,,,0,0,0,0,40,0,0,0,,2006-06-15 00:00,2006-07-10 00:00,2007-04-24 08:01,2007-04-24 08:01,,2007-01-27 00:00,2007-01-27 00:00,,,2006-06-20 08:00,2006-06-26 17:00,,,,,PT_Normal,,,,,1CrtiXdPTtmcQGMSJLL6LA,7983vvBOM0ij0+M8m+BgHx,,,N,0,0,,,2007-02-01 02:43,2007-02-04 01:05,hbe4678,hbe4678,,,0
4487,12460668,14517,6816225,13331,1,100,N,N,N,CP_Units,TT_Task,DT_FixedDUR2,RV_OK,TK_Complete,EK02CPI144,02C OP's & Serv. Model Comments Resolution Approval,,,,0,0,0,0,16,0,0,0,,2006-09-25 08:00,2006-09-29 00:00,2007-05-03 08:01,2007-05-03 08:01,,2007-01-27 00:00,2007-01-27 00:00,,,2006-09-25 08:00,2006-09-26 17:00,,,,,PT_Normal,,,,,LJAV3VOpSReoeBmqdr3AlA,fEZE8Ztb6UqMVVXK0/25/A,,,N,0,0,,,2007-02-01 02:43,2007-02-04 01:05,hbe4678,hbe4678,,,0
4488,12460669,14517,6816225,13331,1,100,N,N,N,CP_Units,TT_Task,DT_FixedDUR2,RV_OK,TK_Complete,EK02GPI144,02G OP's & Serv. Model Comments Resolution Approval,,,,0,0,0,0,40,0,0,0,2006-11-27 00:00,2006-12-11 08:00,2006-12-20 17:00,2007-07-09 08:01,2007-07-09 08:01,,2007-02-02 17:00,2007-02-02 17:00,,,2006-12-11 08:00,2006-12-18 17:00,,,,CS_MSOA,PT_Normal,,,,,lCvtS25vTuWesy4pHnDuKg,vosRW+O9f0K43CxW3x+xjw,,,N,0,0,,,2007-02-01 02:43,2007-02-04 01:05,hbe4678,hbe4678,,,0
4489,12460670,14517,6816225,13331,1,100,N,N,N,CP_Units,TT_Task,DT_FixedDUR2,RV_OK,TK_Complete,EK02HPI144,02H OP's & Serv. Model Comments Resolution Approval,,,,0,0,0,0,16,0,0,0,,2006-09-07 08:00,2006-09-28 00:00,2007-07-02 08:01,2007-07-02 08:01,,2007-01-27 00:00,2007-01-27 00:00,,,2006-09-07 08:00,2006-09-08 17:00,,,,,PT_Normal,,,,,XknGgv1gRSmXc1d8t8r71A,vosRW+O9f0K43CxW3x+xjw,,,N,0,0,,,2007-02-01 02:43,2007-02-04 01:05,hbe4678,hbe4678,,,0
4490,12460671,14517,6816225,13331,1,100,N,N,N,CP_Units,TT_Task,DT_FixedDUR2,RV_OK,TK_Complete,EK02JPI144,02J OP's & Serv. Model Comments Resolution Approval,,,,0,0,0,0,16,0,0,0,,2006-07-07 08:00,2006-07-21 00:00,2007-07-31 08:01,2007-07-31 08:01,,2007-01-27 00:00,2007-01-27 00:00,,,2006-07-07 08:00,2006-07-10 17:00,,,,,PT_Normal,,,,,ZbefyRuiRSOWhFOWO91lbQ,EvlHf6AOUUqzHv5DyHO8qw,,,N,0,0,,,2007-02-01 02:43,2007-02-04 01:05,hbe4678,hbe4678,,,0
4491,12460672,14517,6816225,13331,1,100,N,N,N,CP_Units,TT_Task,DT_FixedDUR2,RV_OK,TK_Complete,EK02YPI144,02Y OP's & Serv. Model Comments Resolution Approval,,,,0,0,0,0,16,0,0,0,,2006-06-28 00:00,2006-07-13 00:00,2007-02-27 08:00,2007-02-27 08:00,,2007-01-27 00:00,2007-01-27 00:00,,,2006-06-27 08:00,2006-06-28 17:00,,,,,PT_Normal,,,,,4oc1atKyQECq3LbANOmr/A,5eP14TSRgkmoa11WGEA9xA,,,N,0,0,,,2007-02-01 02:43,2007-02-04 01:05,hbe4678,hbe4678,,,0
4492,12460673,14517,6816225,13330,1,100,N,N,N,CP_Units,TT_Task,DT_FixedDUR2,RV_OK,TK_Complete,EK02QPI050,02Q Model Comment Resolution Approval,,,,0,0,0,0,24,0,0,0,,2006-02-06 00:00,2006-02-09 00:00,2007-05-07 08:00,2007-05-07 08:00,,2007-01-27 00:00,2007-01-27 00:00,,,2006-03-06 08:00,2006-03-08 17:00,,,,,PT_Normal,,,,,D7ws0YwURh2XCzARWYvMQA,FEIxtbO/N0+Fev3fQUWnqh,,,N,0,0,,,2007-02-01 02:43,2007-02-04 01:05,hbe4678,hbe4678,,,0
4493,12460674,14517,6816225,13330,1,100,N,N,N,CP_Units,TT_Task,DT_FixedDUR2,RV_OK,TK_Complete,EK02CPI050,02C Model Comment Resolution Approval,,,,0,0,0,0,64,0,0,0,,2006-02-22 00:00,2006-03-03 00:00,2007-05-03 08:01,2007-05-03 08:01,,2007-01-27 00:00,2007-01-27 00:00,,,2006-03-01 08:00,2006-03-10 17:00,,,,,PT_Normal,,,,,1mItdhQAQbyeCVQS777yFw,9XZgKtttpkaIK9J5zuoXSB,,,N,0,0,,,2007-02-01 02:43,2007-02-04 01:05,hbe4678,hbe4678,,,0
4494,12460675,14517,6816225,13330,1,100,N,N,N,CP_Units,TT_Task,DT_FixedDUR2,RV_OK,TK_Complete,EK02CPI030,02C Conceptual Layout - Supersketches,,,,0,0,0,0,40,0,0,0,,2005-07-25 00:00,2005-08-01 17:00,2007-05-03 08:01,2007-05-03 08:01,,2007-01-27 00:00,2007-01-27 00:00,,,2005-07-18 08:00,2005-07-22 17:00,,,,,PT_Normal,,,,,7uXb1Dm/QQ2qstlX4JNrNQ,72alMGHv1EqHE5CPRezC1x,,,N,0,0,,,2007-02-01 02:43,2007-02-04 01:05,hbe4678,hbe4678,,,0
4495,12460676,14517,6816225,13330,1,100,N,N,N,CP_Units,TT_Task,DT_FixedDUR2,RV_OK,TK_Complete,EK02HPI030,02H Conceptual Layout - Supersketches,,,,0,0,0,0,160,0,0,0,,2005-04-18 00:00,2005-05-13 00:00,2007-04-28 08:01,2007-04-28 08:01,,2007-01-27 00:00,2007-01-27 00:00,,,2005-05-20 08:00,2005-06-17 17:00,,,,,PT_Normal,,,,,+BOMJCThQ2uRpLvLKOLvHg,xm2gCJPKcU2RGrhw4CgWFx,,,N,0,0,,,2007-02-01 02:43,2007-02-04 01:05,hbe4678,hbe4678,,,0
4496,12460677,14517,6816225,13330,1,100,N,N,N,CP_Units,TT_Task,DT_FixedDUR2,RV_OK,TK_Complete,EK02HPI050,02H Model Comment Resolution Approval,,,,0,0,0,0,24,0,0,0,,2006-01-09 00:00,2006-02-17 00:00,2007-04-28 08:01,2007-04-28 08:01,,2007-01-27 00:00,2007-01-27 00:00,,,2006-02-06 08:00,2006-02-08 17:00,,,,,PT_Normal,,,,,4R0w4nq6SXSyK57p28yddQ,R68IYZQmN0aJCgtBSr/p3R,,,N,0,0,,,2007-02-01 02:43,2007-02-04 01:05,hbe4678,hbe4678,,,0
4497,12460678,14517,6816225,13330,1,100,N,N,N,CP_Units,TT_Task,DT_FixedDUR2,RV_OK,TK_Complete,EK02UPIFWA,02U Plant Layout Model   - Firewater,,,,0,0,0,0,240,0,0,0,,2005-09-22 00:00,2005-11-07 17:00,2006-12-25 08:00,2006-12-25 08:00,,2007-01-27 00:00,2007-01-27 00:00,,,2005-08-15 08:00,2005-09-23 17:00,,,,,PT_Normal,,,,,Hws7WrKASma4Juu8oOUX2g,XVYdq9wbR0Kxtd8wvg8SDh,,,N,0,0,,,2007-02-01 02:43,2007-02-04 01:05,hbe4678,hbe4678,,,0
4498,12460679,14517,6816225,13330,1,100,N,N,N,CP_Units,TT_Task,DT_FixedDUR2,RV_OK,TK_Complete,EK02UPICWA,02U Plant Layout Model   - Cooling Water,,,,0,0,0,0,280,0,0,0,,2005-08-22 00:00,2005-10-13 00:00,2006-12-25 08:00,2006-12-25 08:00,,2007-01-27 00:00,2007-01-27 00:00,,,2005-08-15 08:00,2005-09-30 17:00,,,,,PT_Normal,,,,,ZCh8p9MJSsKf6b0B4AoXng,w6Mv9PqlT0ClU15v5YZkex,,,N,0,0,,,2007-02-01 02:43,2007-02-04 01:05,hbe4678,hbe4678,,,0
4499,12460680,14517,6816225,13330,1,100,N,N,N,CP_Units,TT_Task,DT_FixedDUR2,RV_OK,TK_Complete,EK02UPIOHA,02U Plant Layout Model   - Hot Outfall Sewer,,,,0,0,0,0,128,0,0,0,,2005-08-29 00:00,2005-09-12 00:00,2006-12-25 08:00,2006-12-25 08:00,,2007-01-27 00:00,2007-01-27 00:00,,,2005-08-15 08:00,2005-09-05 17:00,,,,,PT_Normal,,,,,fxYSPyciQAeTGTrg9LRVrA,kkIHmbrBhUO5EegnAtNvZx,,,N,0,0,,,2007-02-01 02:43,2007-02-04 01:05,hbe4678,hbe4678,,,0
4500,12460681,14517,6816225,13330,1,100,N,N,N,CP_Units,TT_Task,DT_FixedDUR2,RV_OK,TK_Complete,EK02UPIOWA,02U Plant Layout Model   - Oily Water Sewer,,,,0,0,0,0,128,0,0,0,,2005-09-27 00:00,2005-11-04 17:00,2006-12-25 08:00,2006-12-25 08:00,,2007-01-27 00:00,2007-01-27 00:00,,,2005-08-15 08:00,2005-09-05 17:00,,,,,PT_Normal,,,,,WFvtSdovTgOENJpZt75gWA,Oqj6Zd4hGUO2puVz1BYOFh,,,N,0,0,,,2007-02-01 02:43,2007-02-04 01:05,hbe4678,hbe4678,,,0
4501,12460682,14517,6816225,13330,1,100,N,N,N,CP_Units,TT_Task,DT_FixedDUR2,RV_OK,TK_Complete,EK02UPIPSA,02U Plant Layout Model   - Process Water Sewer,,,,0,0,0,0,280,0,0,0,,2005-10-17 00:00,2005-11-01 17:00,2006-12-25 08:00,2006-12-25 08:00,,2007-01-27 00:00,2007-01-27 00:00,,,2005-08-15 08:00,2005-09-30 17:00,,,,,PT_Normal,,,,,mn7oo9f0TI26ikHoxAnHcw,VReu2nYEYEuL8Z8qdFrVaR,,,N,0,0,,,2007-02-01 02:43,2007-02-04 01:05,hbe4678,hbe4678,,,0
4502,12460683,14517,6816225,13330,1,100,N,N,N,CP_Units,TT_Task,DT_FixedDUR2,RV_OK,TK_Complete,EK02UPICBA,02U Plant Layout Model   - Benfield Sewer,,,,0,0,0,0,128,0,0,0,,2005-10-03 00:00,2005-11-04 17:00,2006-12-25 08:00,2006-12-25 08:00,,2007-01-27 00:00,2007-01-27 00:00,,,2005-08-15 08:00,2005-09-05 17:00,,,,,PT_Normal,,,,,7sSGsYERRICOkUXWd7lYWw,vQF9zZDUL0mJolyiAx6QaR,,,N,0,0,,,2007-02-01 02:43,2007-02-04 01:05,hbe4678,hbe4678,,,0
4503,12460684,14517,6816225,13330,1,100,N,N,N,CP_Units,TT_Task,DT_FixedDUR2,RV_OK,TK_Complete,EK02DPI031,"02D Conceptual Layout - Supersketches (Re-issue with J-120,124 Data)",,,,0,0,0,0,40,0,0,0,,2005-08-01 08:00,2005-08-15 00:00,2007-04-24 08:01,2007-04-24 08:01,,2007-01-27 00:00,2007-01-27 00:00,,,2005-08-01 08:00,2005-08-05 17:00,,,,,PT_Normal,,,,,3HkPXSuOSr2t1dJ8ZoyY4w,M7mRoj0/N0S88nqOQcmd7h,,,N,0,0,,,2007-02-01 02:43,2007-02-04 01:05,hbe4678,hbe4678,,,0
4504,12460685,14517,6816225,13330,1,100,N,N,N,CP_Units,TT_Task,DT_FixedDUR2,RV_OK,TK_Complete,EK02FPI000,"02F Preliminary Drawings for Supersketch J-104,2003",,,,0,0,0,0,72,0,0,0,,2005-08-08 08:00,2005-08-18 17:00,2007-05-05 08:01,2007-05-05 08:01,,2007-01-27 00:00,2007-01-27 00:00,,,2005-08-08 08:00,2005-08-18 17:00,,,,,PT_Normal,,,,,0NxDchW6RYmmngbpJcEwvg,aL6CaJE+w0a1EHqRDtSEuR,,,N,0,0,,,2007-02-01 02:43,2007-02-04 01:05,hbe4678,hbe4678,,,0
4505,12460686,14517,6816225,13330,1,100,N,N,N,CP_Units,TT_Task,DT_FixedDUR2,RV_OK,TK_Complete,EK02LPI000,"02L Preliminary Drawings for Supersketch J-107,116,121",,,,0,0,0,0,8,0,0,0,,2005-08-12 08:00,2005-08-12 17:00,2007-01-09 08:01,2007-01-09 08:01,,2007-01-27 00:00,2007-01-27 00:00,,,2005-08-12 08:00,2005-08-12 17:00,,,,,PT_Normal,,,,,9U//RGrFTeCAL+/r5YW34A,8Zb23Aocp0CpNs4k3Dl3/x,,,N,0,0,,,2007-02-01 02:43,2007-02-04 01:05,hbe4678,hbe4678,,,0
4506,12460687,14517,6816225,13330,1,100,N,N,N,CP_Units,TT_Task,DT_FixedDUR2,RV_OK,TK_Complete,EK02JPI031,02J Conceptual Layout - Supersketches (Updated),,,,0,0,0,0,160,0,0,0,,2005-05-13 00:00,2005-08-16 00:00,2007-05-07 08:00,2007-05-07 08:00,,2007-01-27 00:00,2007-01-27 00:00,,,2005-05-20 08:00,2005-06-17 17:00,,,,,PT_Normal,,,,,8tNm/Me/RAqO2+mR9IDT6Q,EJIIBdpYDE+c8dHnr4LHwR,,,N,0,0,,,2007-02-01 02:43,2007-02-04 01:05,hbe4678,hbe4678,,,0
4507,12460688,14517,6816225,13330,1,100,N,N,N,CP_Units,TT_Task,DT_FixedDUR2,RV_OK,TK_Complete,EK02KPI031,02K Conceptual Layout - Supersketches (Updated),,,,0,0,0,0,160,0,0,0,,2005-05-03 00:00,2005-08-03 00:00,2007-05-20 08:01,2007-05-20 08:01,,2007-01-27 00:00,2007-01-27 00:00,,,2005-05-20 08:00,2005-06-17 17:00,,,,,PT_Normal,,,,,WbjPKKUPT5icBoprgo+xsw,cklyPs8KeUyTzl/yiMr9Ix,,,N,0,0,,,2007-02-01 02:43,2007-02-04 01:05,hbe4678,hbe4678,,,0
4508,12460689,14517,6816225,13331,1,100,N,N,N,CP_Units,TT_Task,DT_FixedDUR2,RV_OK,TK_Complete,EK02BPI144,02B OP's & Serv. Model Comment Resolution Approval,,,,0,0,0,0,24,0,0,0,,2006-04-26 08:00,2006-04-28 17:00,2007-04-01 08:01,2007-04-01 08:01,,2007-01-27 00:00,2007-01-27 00:00,,,2006-04-26 08:00,2006-04-28 17:00,,,,,PT_Normal,,,,,n96d3MF4Qiqh2eJbHHTS9g,qsQ+f0zDCEayEkWfyIYIvQ,,,N,0,0,,,2007-02-01 02:43,2007-02-04 01:05,hbe4678,hbe4678,,,0
4509,12460690,14517,6816225,13330,1,100,N,N,N,CP_Drtn,TT_Task,DT_FixedDUR2,RV_OK,TK_Complete,EK02CPI021,02C Model Review Comment Resolution,,,,0,0,0,0,192,0,0,0,,2006-01-06 00:00,2006-02-16 00:00,2007-05-03 08:01,2007-05-03 08:01,,2007-01-27 00:00,2007-01-27 00:00,,,2006-02-07 08:01,2006-03-13 08:01,,,,,PT_Normal,,,,,iwL31fxORyeX/Ek+hlS1mA,,,,N,0,0,,,2007-02-01 02:43,2007-02-04 01:05,hbe4678,hbe4678,,,0
4510,12460691,14517,6816225,13330,1,100,N,N,N,CP_Drtn,TT_Task,DT_FixedDUR2,RV_OK,TK_Complete,EK02HPI021,02H Model Review Comment Resolution,,,,0,0,0,0,24,0,0,0,,2005-12-20 00:00,2005-12-30 00:00,2007-04-28 08:01,2007-04-28 08:01,,2007-01-27 00:00,2007-01-27 00:00,,,2006-01-30 08:00,2006-02-01 17:00,,,,,PT_Normal,,,,,8R80II/0RheCfBu07EyJ4w,,,,N,0,0,,,2007-02-01 02:43,2007-02-04 01:05,hbe4678,hbe4678,,,0
4511,12460692,14517,6816225,13331,1,100,N,N,N,CP_Units,TT_Task,DT_FixedDUR2,RV_OK,TK_Complete,EK02API144,02A OP's & Serv. Model Comment Resolution Approval,,,,0,0,0,0,40,0,0,0,,2006-07-05 08:00,2006-07-20 00:00,2007-06-10 08:01,2007-06-10 08:01,,2007-01-27 00:00,2007-01-27 00:00,,,2006-07-05 08:00,2006-07-11 17:00,,,,,PT_Normal,,,,,eyeheQr3SCGegGzjLohvxQ,p2aVtRluvUGL30HxnWOsIR,,,N,0,0,,,2007-02-01 02:43,2007-02-04 01:05,hbe4678,hbe4678,,,0
4512,12460693,14517,6816225,13331,1,100,N,N,N,CP_Units,TT_Task,DT_FixedDUR2,RV_OK,TK_Complete,EK02KPI143,02K OP's & Serv. Model Comment Resolution Approval,,,,0,0,0,0,40,0,0,0,,2006-08-29 08:00,2006-09-25 17:00,2007-06-29 17:00,2007-06-29 17:00,,2007-01-27 00:00,2007-01-27 00:00,,,2006-08-29 08:00,2006-09-04 17:00,,,,,PT_Normal,,,,,u3JwamQkRZyJKXw5VHk2Ow,ef1vSG9Hn021OgXuhpv7LA,,,N,0,0,,,2007-02-01 02:43,2007-02-04 01:05,hbe4678,hbe4678,,,0
4513,12460694,14517,6816225,13330,1,100,N,N,N,CP_Units,TT_Task,DT_FixedDUR2,RV_OK,TK_Complete,EK02LPI050,02L Model Comment Resolution Approval,,,,0,0,0,0,24,0,0,0,,2006-02-10 00:00,2006-02-16 00:00,2007-01-09 08:01,2007-01-09 08:01,,2007-01-27 00:00,2007-01-27 00:00,,,2006-03-01 08:00,2006-03-03 17:00,,,,,PT_Normal,,,,,K9vKMvxaSCqjFS+0Ktcmrw,jViOJ+HTMUGy3j44p8KzUR,,,N,0,0,,,2007-02-01 02:43,2007-02-04 01:05,hbe4678,hbe4678,,,0
4514,12460695,14517,6816225,13330,1,100,N,N,N,CP_Units,TT_Task,DT_FixedDUR2,RV_OK,TK_Complete,EK02BPI030,02B Conceptual Layout - Supersketches,,,,0,0,0,0,160,0,0,0,,2005-04-22 00:00,2005-05-20 00:00,2007-04-01 08:01,2007-04-01 08:01,,2007-01-27 00:00,2007-01-27 00:00,,,2005-05-20 08:00,2005-06-17 17:00,,,,,PT_Normal,,,,,CXvX0JGaQM2vFz0EyUljXg,qaqBof5hHU6sRIvutQSPSR,,,N,0,0,,,2007-02-01 02:43,2007-02-04 01:05,hbe4678,hbe4678,,,0
4515,12460696,14517,6816225,13330,1,100,N,N,N,CP_Units,TT_Task,DT_FixedDUR2,RV_OK,TK_Complete,EK02BPI050,02B Model Comment Resolution Approval,,,,0,0,0,0,24,0,0,0,,2006-02-02 00:00,2006-02-08 00:00,2007-04-01 08:01,2007-04-01 08:01,,2007-01-27 00:00,2007-01-27 00:00,,,2006-02-27 08:00,2006-03-01 17:00,,,,,PT_Normal,,,,,VYlnAULrS6mjgqkazX5BMQ,C3+tyjusE0CrDF0ebRoC8R,,,N,0,0,,,2007-02-01 02:43,2007-02-04 01:05,hbe4678,hbe4678,,,0
4516,12460697,14517,6816225,13330,1,100,N,N,N,CP_Units,TT_Task,DT_FixedDUR2,RV_OK,TK_Complete,EK02DPI030,02D Conceptual Layout - Supersketches,,,,0,0,0,0,40,0,0,0,,2005-05-27 08:00,2005-06-03 17:00,2007-04-24 08:01,2007-04-24 08:01,,2007-01-27 00:00,2007-01-27 00:00,,,2005-05-27 08:00,2005-06-03 17:00,,,,,PT_Normal,,,,,GFpVIt7mRmm+wJJvex1wYw,3i+X8DXAwEKIzRtzXkU2Wh,,,N,0,0,,,2007-02-01 02:43,2007-02-04 01:05,hbe4678,hbe4678,,,0
4517,12460698,14517,6816225,13330,1,100,N,N,N,CP_Units,TT_Task,DT_FixedDUR2,RV_OK,TK_Complete,EK02DPI050,02D Model Comment Resolution Approval,,,,0,0,0,0,24,0,0,0,,2006-01-23 00:00,2006-02-20 00:00,2007-04-24 08:01,2007-04-24 08:01,,2007-01-27 00:00,2007-01-27 00:00,,,2006-02-06 08:00,2006-02-08 17:00,,,,,PT_Normal,,,,,n6UnWCKiTs6XmkVrnBclBg,PvpFd7dK+UW23+21DeSojx,,,N,0,0,,,2007-02-01 02:43,2007-02-04 01:05,hbe4678,hbe4678,,,0
4518,12460699,14517,6816225,13330,1,100,N,N,N,CP_Units,TT_Task,DT_FixedDUR2,RV_OK,TK_Complete,EK02EPI030,02E Conceptual Layout - Supersketches,,,,0,0,0,0,160,0,0,0,,2005-04-22 00:00,2005-05-13 00:00,2007-04-15 08:01,2007-04-15 08:01,,2007-01-27 00:00,2007-01-27 00:00,,,2005-05-20 08:00,2005-06-17 17:00,,,,,PT_Normal,,,,,hJiwCJAXQuy//RveUOKojA,M7mRoj0/N0S88nqOQcmd7h,,,N,0,0,,,2007-02-01 02:43,2007-02-04 01:05,hbe4678,hbe4678,,,0
4519,12460700,14517,6816225,13330,1,100,N,N,N,CP_Units,TT_Task,DT_FixedDUR2,RV_OK,TK_Complete,EK02EPI050,02E Model Comment Resolution Approval,,,,0,0,0,0,24,0,0,0,,2006-02-24 00:00,2006-02-28 00:00,2007-04-15 08:01,2007-04-15 08:01,,2007-01-27 00:00,2007-01-27 00:00,,,2006-02-06 08:00,2006-02-08 17:00,,,,,PT_Normal,,,,,a5cLCU8OSq6g43hDdFvkkQ,5ppHkDLGLEWnIlG/PCBhIx,,,N,0,0,,,2007-02-01 02:43,2007-02-04 01:05,hbe4678,hbe4678,,,0
4520,12460701,14517,6816225,13330,1,100,N,N,N,CP_Units,TT_Task,DT_FixedDUR2,RV_OK,TK_Complete,EK02FPI030,02F Conceptual Layout - Supersketches,,,,0,0,0,0,80,0,0,0,,2005-10-03 08:00,2005-10-11 00:00,2007-05-05 08:01,2007-05-05 08:01,,2007-01-27 00:00,2007-01-27 00:00,,,2005-10-03 08:00,2005-10-14 17:00,,,,,PT_Normal,,,,,QKBVRc4LRIaX3Fp4K9Oq2g,UoPeQQkVK06w4iv0QNVsGx,,,N,0,0,,,2007-02-01 02:43,2007-02-04 01:05,hbe4678,hbe4678,,,0
4521,12460702,14517,6816225,13330,1,100,N,N,N,CP_Units,TT_Task,DT_FixedDUR2,RV_OK,TK_Complete,EK02FPI050,02F Model Comment Resolution Approval,,,,0,0,0,0,24,0,0,0,,2006-01-30 00:00,2006-02-16 00:00,2007-05-05 08:01,2007-05-05 08:01,,2007-01-27 00:00,2007-01-27 00:00,,,2006-02-06 08:00,2006-02-08 17:00,,,,,PT_Normal,,,,,bWSQwpP/QBm1T5geuXoYtw,kSxmGO5KJ0mZF3Dum3X2Eh,,,N,0,0,,,2007-02-01 02:43,2007-02-04 01:05,hbe4678,hbe4678,,,0
4522,12460703,14517,6816225,13330,1,100,N,N,N,CP_Units,TT_Task,DT_FixedDUR2,RV_OK,TK_Complete,EK02GPI030,02G Conceptual Layout - Supersketches,,,,0,0,0,0,160,0,0,0,,2005-08-01 08:00,2005-08-30 17:00,2007-05-07 08:00,2007-05-07 08:00,,2007-01-27 00:00,2007-01-27 00:00,,,2005-08-01 08:00,2005-08-26 17:00,,,,,PT_Normal,,,,,SI7B2mJiTim12+5+CkVzXQ,M6vpRmAbwECETHt5Nx2nUR,,,N,0,0,,,2007-02-01 02:43,2007-02-04 01:05,hbe4678,hbe4678,,,0
4523,12460704,14517,6816225,13330,1,100,N,N,N,CP_Units,TT_Task,DT_FixedDUR2,RV_OK,TK_Complete,EK02GPI050,02G Model Comment Resolution Approval,,,,0,0,0,0,24,0,0,0,,2006-08-08 00:00,2006-08-10 00:00,2007-05-07 08:00,2007-05-07 08:00,,2007-01-27 00:00,2007-01-27 00:00,,,2006-08-11 08:00,2006-08-15 17:00,,,,,PT_Normal,,,,,/xq+H4jTS/+MNdw66rMJ0Q,q1428fJqeUGOZpFaJYRj1R,,,N,0,0,,,2007-02-01 02:43,2007-02-04 01:05,hbe4678,hbe4678,,,0
4524,12460705,14517,6816225,13330,1,100,N,N,N,CP_Units,TT_Task,DT_FixedDUR2,RV_OK,TK_Complete,EK02JPI030,02J Conceptual Layout - Supersketches,,,,0,0,0,0,160,0,0,0,,2005-04-22 00:00,2005-05-13 00:00,2007-05-07 08:00,2007-05-07 08:00,,2007-01-27 00:00,2007-01-27 00:00,,,2005-05-20 08:00,2005-06-17 17:00,,,,,PT_Normal,,,,,ZSbHm30QQx2hAmeFYL34/w,UpXRuJN0E0mSPtCMXf2mKx,,,N,0,0,,,2007-02-01 02:43,2007-02-04 01:05,hbe4678,hbe4678,,,0
4525,12460706,14517,6816225,13330,1,100,N,N,N,CP_Units,TT_Task,DT_FixedDUR2,RV_OK,TK_Complete,EK02JPI050,02J Model Comment Resolution Approval,,,,0,0,0,0,16,0,0,0,,2006-02-09 00:00,2006-02-10 00:00,2007-05-07 08:00,2007-05-07 08:00,,2007-01-27 00:00,2007-01-27 00:00,,,2006-03-01 08:00,2006-03-02 17:00,,,,,PT_Normal,,,,,3J9PN3+NT0+vmI4ufYRIZw,3UFLgJRsK0qsIixxoIvOrR,,,N,0,0,,,2007-02-01 02:43,2007-02-04 01:05,hbe4678,hbe4678,,,0
4526,12460707,14517,6816225,13330,1,100,N,N,N,CP_Units,TT_Task,DT_FixedDUR2,RV_OK,TK_Complete,EK02KPI030,02K Conceptual Layout - Supersketches,,,,0,0,0,0,160,0,0,0,,2005-04-22 00:00,2005-05-13 00:00,2007-05-20 08:01,2007-05-20 08:01,,2007-01-27 00:00,2007-01-27 00:00,,,2005-05-20 08:00,2005-06-17 17:00,,,,,PT_Normal,,,,,H6A99ZyaQEiCqN3xEQvTTw,EJIIBdpYDE+c8dHnr4LHwR,,,N,0,0,,,2007-02-01 02:43,2007-02-04 01:05,hbe4678,hbe4678,,,0
4527,12460708,14517,6816225,13330,1,100,N,N,N,CP_Units,TT_Task,DT_FixedDUR2,RV_OK,TK_Complete,EK02KPI050,02K Model Comment Resolution Approval,,,,0,0,0,0,24,0,0,0,,2006-01-16 00:00,2006-01-19 00:00,2007-05-20 08:01,2007-05-20 08:01,,2007-01-27 00:00,2007-01-27 00:00,,,2006-03-06 08:00,2006-03-08 17:00,,,,,PT_Normal,,,,,Yhk3JRDpQpiWaGzc0W88KQ,CDtVKhGb1EaoF25mV1ne4h,,,N,0,0,,,2007-02-01 02:43,2007-02-04 01:05,hbe4678,hbe4678,,,0
4528,12460709,14517,6816225,13330,1,100,N,N,N,CP_Units,TT_Task,DT_FixedDUR2,RV_OK,TK_Complete,EK02MPI030,02M Conceptual Layout - Supersketches,,,,0,0,0,0,40,0,0,0,,2005-07-11 08:00,2005-07-14 00:00,2007-05-07 08:00,2007-05-07 08:00,,2007-01-27 00:00,2007-01-27 00:00,,,2005-07-11 08:00,2005-07-15 17:00,,,,,PT_Normal,,,,,g5Gr9g6pRfCd4UkhyHCfzg,NkTnw+Q08Eyh1S5KK1joOh,,,N,0,0,,,2007-02-01 02:43,2007-02-04 01:05,hbe4678,hbe4678,,,0
4529,12460710,14517,6816225,13330,1,100,N,N,N,CP_Units,TT_Task,DT_FixedDUR2,RV_OK,TK_Complete,EK02MPI050,02M Model Comment Resolution Approval,,,,0,0,0,0,24,0,0,0,,2006-01-19 00:00,2006-01-23 00:00,2007-05-07 08:00,2007-05-07 08:00,,2007-01-27 00:00,2007-01-27 00:00,,,2006-03-01 08:00,2006-03-03 17:00,,,,,PT_Normal,,,,,XfuA894jTwOYD6n7rGM50Q,lSeMJlzKIEqtelFrrlvslB,,,N,0,0,,,2007-02-01 02:43,2007-02-04 01:05,hbe4678,hbe4678,,,0
4530,12460711,14517,6816225,13330,1,100,N,N,N,CP_Units,TT_Task,DT_FixedDUR2,RV_OK,TK_Complete,EK02NPI030,02N Conceptual Layout - Supersketches,,,,0,0,0,0,80,0,0,0,,2005-05-23 08:00,2005-06-03 17:00,2007-05-07 08:00,2007-05-07 08:00,,2007-01-27 00:00,2007-01-27 00:00,,,2005-05-23 08:00,2005-06-06 17:00,,,,,PT_Normal,,,,,RD6da8tnQTmfoC9jqqK0zQ,ImZyQ9Ryy0Satcf5D3tU5B,,,N,0,0,,,2007-02-01 02:43,2007-02-04 01:05,hbe4678,hbe4678,,,0
4531,12460712,14517,6816225,13330,1,100,N,N,N,CP_Units,TT_Task,DT_FixedDUR2,RV_OK,TK_Complete,EK02NPI050,02N Model Comment Resolution Approval,,,,0,0,0,0,24,0,0,0,,2006-02-27 08:00,2006-03-01 17:00,2007-05-07 08:00,2007-05-07 08:00,,2007-01-27 00:00,2007-01-27 00:00,,,2006-02-27 08:00,2006-03-01 17:00,,,,,PT_Normal,,,,,04BI+Ui5QyGPc4ohPTZaCw,qk4vRJ8lnEK6lBpNyNtu2x,,,N,0,0,,,2007-02-01 02:43,2007-02-04 01:05,hbe4678,hbe4678,,,0
4532,12460713,14517,6816225,13330,1,100,N,N,N,CP_Units,TT_Task,DT_FixedDUR2,RV_OK,TK_Complete,EK02PPI030,02P Conceptual Layout - Supersketches,,,,0,0,0,0,40,0,0,0,,2005-10-05 00:00,2005-10-11 00:00,2007-05-03 08:01,2007-05-03 08:01,,2007-01-27 00:00,2007-01-27 00:00,,,2005-10-10 08:00,2005-10-14 17:00,,,,,PT_Normal,,,,,YyCgYoemQna6C3L3mhy9FA,6DWwcjL9GEKhip+FICN1Oh,,,N,0,0,,,2007-02-01 02:43,2007-02-04 01:05,hbe4678,hbe4678,,,0
4533,12460714,14517,6816225,13330,1,100,N,N,N,CP_Units,TT_Task,DT_FixedDUR2,RV_OK,TK_Complete,EK02PPI050,02P Model Comment Resolution Approval,,,,0,0,0,0,24,0,0,0,,2006-02-01 00:00,2006-02-06 00:00,2007-05-03 08:01,2007-05-03 08:01,,2007-01-27 00:00,2007-01-27 00:00,,,2006-03-07 08:00,2006-03-09 17:00,,,,,PT_Normal,,,,,5+4dKxL9TwGP3KjhrsMyJQ,Z1xmhxAF1U2T131qufctDh,,,N,0,0,,,2007-02-01 02:43,2007-02-04 01:05,hbe4678,hbe4678,,,0
4534,12460715,14517,6816225,13330,1,100,N,N,N,CP_Units,TT_Task,DT_FixedDUR2,RV_OK,TK_Complete,EK02QPI030,02Q Conceptual Layout - Supersketches,,,,0,0,0,0,160,0,0,0,,2005-04-22 00:00,2005-05-20 00:00,2007-05-07 08:00,2007-05-07 08:00,,2007-01-27 00:00,2007-01-27 00:00,,,2005-05-20 08:00,2005-06-17 17:00,,,,,PT_Normal,,,,,+ogzRPhoTQyAvMjZ1KsIbQ,gDMboO1Bm0O7fn3LbEiDgx,,,N,0,0,,,2007-02-01 02:43,2007-02-04 01:05,hbe4678,hbe4678,,,0
4535,12460716,14517,6816225,13330,1,100,N,N,N,CP_Units,TT_Task,DT_FixedDUR2,RV_OK,TK_Complete,EK02LPI030,02L Conceptual Layout - Supersketches,,,,0,0,0,0,40,0,0,0,,2005-08-15 00:00,2005-08-22 00:00,2007-01-09 08:01,2007-01-09 08:01,,2007-01-27 00:00,2007-01-27 00:00,,,2005-08-12 08:00,2005-08-18 17:00,,,,,PT_Normal,,,,,Q6Iq6QVdRueE+K6Irbg6OA,,,,N,0,0,,,2007-02-01 02:43,2007-02-04 01:05,hbe4678,hbe4678,,,0
4536,12460717,14517,6816225,13330,1,100,N,N,N,CP_Units,TT_Task,DT_FixedDUR2,RV_OK,TK_Complete,EK000PI150,ISBL Pipe Rack Study,,,,0,,0,,56,,,0,,2005-03-21 08:00,2005-04-12 17:00,2006-12-25 08:00,2006-12-25 08:00,,2007-01-27 00:00,2007-01-27 00:00,,,2005-03-21 08:00,2005-03-29 17:00,,,,,PT_Normal,,,,,v4aeJ1F1T8qL6IKLvKVGJQ,,,,N,,,,,2007-02-01 02:43,2007-02-04 01:05,hbe4678,hbe4678,,,0
4537,12460718,14517,6816225,13330,1,100,N,N,N,CP_Units,TT_Task,DT_FixedDUR2,RV_OK,TK_Complete,EK020PI012,Plot Plan - ISBL (Area 02) Issue IPL,,,,0,0,0,0,240,0,0,0,,2005-06-03 08:00,2005-10-28 00:00,2006-12-25 08:00,2006-12-25 08:00,,2007-01-27 00:00,2007-01-27 00:00,,,2005-06-03 08:00,2005-07-18 17:00,,,,,PT_Normal,,,,,+LnsBzDpSVuN3HeoI0HhqA,,,,N,0,0,,,2007-02-01 02:43,2007-02-04 01:05,hbe4678,hbe4678,,,0
4538,12460719,14517,6816225,1043,1,100,N,N,N,CP_Units,TT_Task,DT_FixedDUR2,RV_OK,TK_Complete,EK000PE115,Equivalent Line Counts By Planning Area - ISBL,,,,0,,0,,80,,,0,,2005-03-14 08:00,2005-04-08 17:00,2009-02-15 08:01,2009-02-15 08:01,,2007-01-27 00:00,2007-01-27 00:00,,,2005-03-14 08:00,2005-03-25 16:00,,,,,PT_Normal,,,,,Ie6UeLN6RS6s3sJniznLUQ,,,,N,,,,,2007-02-01 02:43,2007-02-04 01:05,hbe4678,hbe4678,,,0
4539,12460720,14517,6816225,13330,1,100,N,N,N,CP_Units,TT_Task,DT_FixedDUR2,RV_OK,TK_Complete,EK020PI010,Develop Plot Plan & ID Areas - ISBL (Area 02) ICA,,,,0,,0,,80,,,0,,2005-03-07 08:00,2005-04-01 17:00,2006-11-28 08:01,2006-11-28 08:01,,2007-01-27 00:00,2007-01-27 00:00,,,2005-03-07 08:00,2005-03-18 17:00,,,,,PT_Normal,,,,,kTBWJo/hSfS5sh+ZlF7tWg,,,,N,,,,,2007-02-01 02:43,2007-02-04 01:05,hbe4678,hbe4678,,,0
4540,12460721,14517,6816225,13330,1,100,N,N,N,CP_Units,TT_Task,DT_FixedDUR2,RV_OK,TK_Complete,EK020PI011,Plot Plan - ISBL (Area 02) Client ICA Approval,,,,0,0,0,,80,,0,0,,2005-04-04 08:00,2005-04-18 00:00,2006-12-25 08:00,2006-12-25 08:00,,2007-01-27 00:00,2007-01-27 00:00,,,2005-04-04 08:00,2005-04-15 17:00,,,,,PT_Normal,,,,,Xok6eh2nTDu3vk8h0AY1RA,,,,N,0,0,,,2007-02-01 02:43,2007-02-04 01:05,hbe4678,hbe4678,,,0
4541,12460722,14517,6816225,13330,1,100,N,N,N,CP_Units,TT_Task,DT_FixedDUR2,RV_OK,TK_Complete,EK02API030,02A Conceptual Layout - Supersketches,,,,0,0,0,0,160,0,0,0,,2005-04-22 00:00,2005-05-20 00:00,2007-04-19 08:00,2007-04-19 08:00,,2007-01-27 00:00,2007-01-27 00:00,,,2005-05-20 08:00,2005-06-17 17:00,,,,,PT_Normal,,,,,RMox+fJqTR26lz6SXOqANg,72alMGHv1EqHE5CPRezC1x,,,N,0,0,,,2007-02-01 02:43,2007-02-04 01:05,hbe4678,hbe4678,,,0
4542,12460723,14517,6816225,13330,1,100,N,N,N,CP_Units,TT_Task,DT_FixedDUR2,RV_OK,TK_Complete,EK02API050,02A Model Comment Resolution Approval,,,,0,0,0,0,40,0,0,0,,2006-01-30 08:00,2006-02-06 00:00,2007-05-07 08:00,2007-05-07 08:00,,2007-01-27 00:00,2007-01-27 00:00,,,2006-01-30 08:00,2006-02-03 17:00,,,,,PT_Normal,,,,,WTdjUQ1ISsm8NDu5fatbWQ,9XZgKtttpkaIK9J5zuoXSB,,,N,0,0,,,2007-02-01 02:43,2007-02-04 01:05,hbe4678,hbe4678,,,0
4543,12460724,14517,6816226,13332,0,0,N,N,N,CP_Drtn,TT_FinMile,DT_FixedDrtn,RV_OK,TK_NotStart,XE000OW450,(EBIC) Operator Training,,3784.01666666667,4256,0,0,0,0,0,0,0,0,2007-10-30 17:00,,,2009-02-15 08:01,2009-02-15 08:01,,2007-10-30 17:00,2007-10-30 17:00,2007-10-30 17:00,2007-10-30 17:00,2007-10-30 17:00,2007-10-30 17:00,,2009-02-15 08:01,2009-02-15 08:01,CS_MEOA,PT_Normal,,,,,dfViQJxlQUmbAyRTt7l5ig,,,,N,0,0,,,2007-02-01 02:43,2007-02-04 01:00,hbe4678,hbe4678,2007-10-30 17:00,2007-10-30 17:00,0
4544,12460725,14517,6816226,13332,0,0,N,N,N,CP_Drtn,TT_FinMile,DT_FixedDrtn,RV_OK,TK_NotStart,XE000OW455,(EBIC) Nitrogen Supply & Storage @ Port,,3288,3759.98333333333,0,0,0,0,0,0,0,0,2008-01-01 00:00,,,2009-02-15 08:01,2009-02-15 08:01,,2008-01-01 08:01,2008-01-01 08:01,2008-01-01 08:01,2008-01-01 08:01,2008-01-01 08:01,2008-01-01 08:01,,2009-02-15 08:01,2009-02-15 08:01,CS_MEOA,PT_Normal,,,,,IUlzlKIqTFqLFTfZl53zEw,,,,N,0,0,,,2007-02-01 02:43,2007-02-04 01:00,hbe4678,hbe4678,2008-01-01 08:01,2008-01-01 08:01,0
4545,12460726,14517,6816226,13332,0,0,N,N,N,CP_Drtn,TT_FinMile,DT_FixedDrtn,RV_OK,TK_NotStart,XE000OW470,(EBIC) Purchase First Gas,,3568,4039.98333333333,0,0,0,0,0,0,0,0,2007-11-27 08:01,,,2009-02-15 08:01,2009-02-15 08:01,,2007-11-27 08:01,2007-11-27 08:01,2007-11-27 08:01,2007-11-27 08:01,2007-11-27 08:01,2007-11-27 08:01,,2009-02-15 08:01,2009-02-15 08:01,CS_MEOA,PT_Normal,,,,,GZULm4/iQdWoe6uPQJLgFA,,,,N,0,0,,,2007-02-01 02:43,2007-02-04 01:00,hbe4678,hbe4678,2007-11-27 08:01,2007-11-27 08:01,0
4546,12460727,14517,6816226,13332,0,100,N,N,N,CP_Drtn,TT_FinMile,DT_FixedDrtn,RV_OK,TK_Complete,XE000OW160,(EBIC) Execute Contracts - EPC,,,,0,0,0,0,0,0,0,0,,2005-11-17 00:00,2005-11-17 00:00,2009-02-15 08:01,2009-02-15 08:01,,2007-01-27 00:00,2007-01-27 00:00,,,2005-11-12 08:01,2005-11-12 08:01,,,,,PT_Normal,,,,,CqJ2KLZSRR62PoJjs3txmg,,,,N,0,0,,,2007-02-01 02:43,2007-02-04 01:05,hbe4678,hbe4678,,,0
4547,12460728,14517,6816226,13332,0,0,N,N,N,CP_Drtn,TT_FinMile,DT_FixedDrtn,RV_OK,TK_NotStart,XE000OW230,(EBIC) Permit - Operating Permit (SPDC),,5968,6439.98333333333,0,0,0,0,0,0,0,0,2007-01-31 08:01,,,2009-02-15 08:01,2009-02-15 08:01,,2007-01-31 08:01,2007-01-31 08:01,2007-01-31 08:01,2007-01-31 08:01,2007-01-31 08:01,2007-01-31 08:01,,2009-02-15 08:01,2009-02-15 08:01,CS_MEOA,PT_Normal,,,,,5+n6tfEbSI2o9goXkiyY/g,,,,N,0,0,,,2007-02-01 02:43,2007-02-04 01:00,hbe4678,hbe4678,2007-01-31 08:01,2007-01-31 08:01,0
4548,12460729,14517,6816226,13332,0,100,N,N,N,CP_Drtn,TT_FinMile,DT_FixedDrtn,RV_OK,TK_Complete,XE000OW270,(EBIC) Permit - Buildings (SIDC),,,,0,0,0,0,0,0,0,0,,2006-04-30 00:00,2006-04-30 00:00,2007-01-10 08:00,2007-01-10 08:00,,2007-01-27 00:00,2007-01-27 00:00,,,2006-06-01 08:01,2006-06-01 08:01,,,,,PT_Normal,,,,,B9TXR6vtS+WwiuC9faBt6A,,,,N,0,0,,,2007-02-01 02:43,2007-02-04 01:05,hbe4678,hbe4678,,,0
4549,12460730,14517,6816226,13332,0,100,N,N,N,CP_Drtn,TT_FinMile,DT_FixedDrtn,RV_OK,TK_Complete,XE000OW290,(EBIC) Telephones @ Site & Port,,,,0,0,0,0,0,0,0,0,,2006-03-30 00:00,2006-03-30 00:00,2009-02-15 08:01,2009-02-15 08:01,,2007-01-27 00:00,2007-01-27 00:00,,,2006-04-08 08:01,2006-04-08 08:01,,,,,PT_Normal,,,,,8q6/YTduTJ6MC9PT8dKRdw,,,,N,0,0,,,2007-02-01 02:43,2007-02-04 01:05,hbe4678,hbe4678,,,0
4550,12460731,14517,6816226,13332,0,100,N,N,N,CP_Drtn,TT_FinMile,DT_FixedDrtn,RV_OK,TK_Complete,XE000OW305,(EBIC) Permit - Free Zone Status (SIDC),,,,0,0,0,0,0,0,0,0,,2006-06-01 00:00,2006-06-01 00:00,2009-02-15 08:01,2009-02-15 08:01,,2007-01-27 00:00,2007-01-27 00:00,,,2006-06-03 08:01,2006-06-03 08:01,,,,,PT_Normal,,,,,3c0tH4cOQrSIXfiIJpCi/g,,,,N,0,0,,,2007-02-01 02:43,2007-02-04 01:05,hbe4678,hbe4678,,,0
4551,12460732,14517,6816226,13332,0,100,N,N,N,CP_Drtn,TT_FinMile,DT_FixedDrtn,RV_OK,TK_Complete,XE000OW310,(EBIC) Arrange For Solid Waste Collection/Disposal,,,,0,0,0,0,0,0,0,0,,2006-06-05 00:00,2006-06-05 00:00,2009-02-15 08:01,2009-02-15 08:01,,2007-01-27 00:00,2007-01-27 00:00,,,2006-06-30 08:01,2006-06-30 08:01,,,,,PT_Normal,,,,,NRg6btV1T7ezyHz2BPJzgQ,,,,N,0,0,,,2007-02-01 02:43,2007-02-04 01:05,hbe4678,hbe4678,,,0
4552,12460733,14517,6816226,13332,0,0,N,N,N,CP_Drtn,TT_FinMile,DT_FixedDrtn,RV_OK,TK_NotStart,XE000OW335,(EBIC) Permit - Land Easement (SIDC Assistance),,6000,6471.98333333333,0,0,0,0,0,0,0,0,2007-01-19 08:01,,,2009-02-15 08:01,2009-02-15 08:01,,2007-01-27 08:01,2007-01-27 08:01,2007-01-27 08:01,2007-01-27 08:01,2007-01-27 08:01,2007-01-27 08:01,,2009-02-15 08:01,2009-02-15 08:01,CS_MEOA,PT_Normal,,,,,ULxp+ZLCT+WpSH9kNeZ84Q,,,,N,0,0,,,2007-02-01 02:43,2007-02-04 01:00,hbe4678,hbe4678,2007-01-27 08:01,2007-01-27 08:01,0
4553,12460734,14517,6816226,13332,0,100,N,N,N,CP_Drtn,TT_FinMile,DT_FixedDrtn,RV_OK,TK_Complete,XE05AOW340,(EBIC) Clear & Level Site For Ammonia Storage,,,,0,0,0,0,0,0,0,0,,2006-06-30 00:00,2006-06-30 00:00,2007-11-06 08:01,2007-11-06 08:01,,2007-01-27 00:00,2007-01-27 00:00,,,2006-07-29 08:01,2006-07-29 08:01,,,,,PT_Normal,,,,,shAnywBfR1mbOLtHjBrrmQ,,,,N,0,0,,,2007-02-01 02:43,2007-02-04 01:05,hbe4678,hbe4678,,,0
4554,12460735,14517,6816226,13332,0,0,N,N,N,CP_Drtn,TT_FinMile,DT_FixedDrtn,RV_OK,TK_NotStart,XE000OW345,(EBIC) Purchase Chemicals For Operation,,6000,6471.98333333333,0,0,0,0,0,0,0,0,2006-12-31 08:01,,,2009-02-15 08:01,2009-02-15 08:01,,2007-01-27 08:01,2007-01-27 08:01,2007-01-27 08:01,2007-01-27 08:01,2007-01-27 08:01,2007-01-27 08:01,,2009-02-15 08:01,2009-02-15 08:01,CS_MEOA,PT_Normal,,,,,2aNks8v5RQOvK9GW3SCATA,,,,N,0,0,,,2007-02-01 02:43,2007-02-04 01:00,hbe4678,hbe4678,2007-01-27 08:01,2007-01-27 08:01,0
4555,12460736,14517,6816226,13332,0,0,N,N,N,CP_Drtn,TT_FinMile,DT_FixedDrtn,RV_OK,TK_NotStart,XE000OW350,(EBIC) Clear & Level Site For Corridor Piping,,1008,0,0,0,0,0,0,0,0,0,2007-02-28 08:01,,,2007-07-04 08:01,2007-07-04 08:01,,2007-02-28 08:01,2007-02-28 08:01,2007-02-28 08:01,2007-02-28 08:01,2007-02-28 08:01,2007-02-28 08:01,,2007-07-04 08:01,2007-07-04 08:01,CS_MEOA,PT_Normal,,,,,XFcgutN5SomtSK7bpgcsew,,,,N,0,0,,,2007-02-01 02:43,2007-02-01 02:43,hbe4678,hbe4678,2007-02-28 08:01,2007-02-28 08:01,0
4556,12460737,14517,6816226,13332,0,0,N,N,N,CP_Drtn,TT_FinMile,DT_FixedDrtn,RV_OK,TK_NotStart,XE000OW120,(EBIC) Arrange For First Shipment Of Product,,4760,5231.98333333333,0,0,0,0,0,0,0,0,2007-07-01 08:01,,,2009-02-15 08:01,2009-02-15 08:01,,2007-07-01 08:01,2007-07-01 08:01,2007-07-01 08:01,2007-07-01 08:01,2007-07-01 08:01,2007-07-01 08:01,,2009-02-15 08:01,2009-02-15 08:01,CS_MEOA,PT_Normal,,,,,VPkhSfplTBy6kufrYInAjA,,,,N,0,0,,,2007-02-01 02:43,2007-02-04 01:00,hbe4678,hbe4678,2007-07-01 08:01,2007-07-01 08:01,0
4557,12460738,14517,6816226,13332,0,100,N,N,N,CP_Drtn,TT_FinMile,DT_FixedDrtn,RV_OK,TK_Complete,XE000OW341,(EBIC) Permit - Wall,,,,0,0,0,0,0,0,0,0,,2006-03-24 00:00,2006-03-24 00:00,2006-11-21 08:01,2006-11-21 08:01,,2007-01-27 00:00,2007-01-27 00:00,,,2006-05-01 08:01,2006-05-01 08:01,,,,,PT_Normal,,,,,XeG5pVb7SEWqBfXDGKv0Fw,2RvZ4wE4bUudt0Rrq3E9JQ,,,Y,0,0,,,2007-02-01 02:43,2007-02-04 01:05,hbe4678,hbe4678,,,0
4558,12460739,14517,6816226,13332,0,0,N,N,N,CP_Drtn,TT_FinMile,DT_FixedDrtn,RV_OK,TK_NotStart,XE000OW340,(EBIC) Permit - Tanks (SIDC),,6000,6471.98333333333,0,0,0,0,0,0,0,0,2007-01-19 08:01,,,2009-02-15 08:01,2009-02-15 08:01,,2007-01-27 08:01,2007-01-27 08:01,2007-01-27 08:01,2007-01-27 08:01,2007-01-27 08:01,2007-01-27 08:01,,2009-02-15 08:01,2009-02-15 08:01,CS_MEOA,PT_Normal,,,,,AatSawspRfekrg9COOzM6A,vhBJTeObZEiDmOxXNQPevh,,,N,0,0,,,2007-02-01 02:43,2007-02-04 01:00,hbe4678,hbe4678,2007-01-27 08:01,2007-01-27 08:01,0
4559,12460740,14517,6816226,13330,1,100,N,N,N,CP_Units,TT_Task,DT_FixedDUR2,RV_OK,TK_Complete,XE000OW300,04A SPDC TO Provide Required Eng. Data,,,,0,0,0,0,80,0,0,0,,2006-04-24 00:00,2006-06-12 17:00,2007-05-07 08:00,2007-05-07 08:00,,2007-01-27 00:00,2007-01-27 00:00,,,2006-05-01 08:00,2006-05-12 17:00,,,,,PT_Normal,,,,,Rs227xpTSKiiSn2usQSbVw,/SJmkV8T0Eu3tWAHsV9kNh,,,N,0,0,,,2007-02-01 02:43,2007-02-04 01:05,hbe4678,hbe4678,,,0
4560,12460741,14517,6816226,13330,1,100,N,N,N,CP_Units,TT_Task,DT_FixedDUR2,RV_OK,TK_Complete,XE000OW301,05B SPDC TO Provide Required Eng. Data,,,,0,0,0,0,80,0,0,0,,2006-03-01 00:00,2006-11-10 17:00,2007-05-08 08:01,2007-05-08 08:01,,2007-01-27 00:00,2007-01-27 00:00,,,2006-05-09 08:00,2006-05-22 17:00,,,,,PT_Normal,,,,,VHdncl97QLy4Goxrc/EQNw,4BakSdcTAU6IMlUdxAFd/B,,,N,0,0,,,2007-02-01 02:43,2007-02-04 01:05,hbe4678,hbe4678,,,0
4561,12460742,14517,6816226,13332,0,0,N,N,N,CP_Drtn,TT_FinMile,DT_FixedDrtn,RV_OK,TK_NotStart,XE000OW370,(EBIC) Permit - Tanks (SPDC),,6000,6471.98333333333,0,0,0,0,0,0,0,0,2007-01-19 08:01,,,2009-02-15 08:01,2009-02-15 08:01,,2007-01-27 08:01,2007-01-27 08:01,2007-01-27 08:01,2007-01-27 08:01,2007-01-27 08:01,2007-01-27 08:01,,2009-02-15 08:01,2009-02-15 08:01,CS_MEOA,PT_Normal,,,,,4vFe7OIOT72Uylz8BsvLnw,2RvZ4wE4bUudt0Rrq3E9JQ,,,N,0,0,,,2007-02-01 02:43,2007-02-04 01:00,hbe4678,hbe4678,2007-01-27 08:01,2007-01-27 08:01,0
4562,12460743,14517,6816226,13332,0,100,N,N,N,CP_Drtn,TT_FinMile,DT_FixedDrtn,RV_OK,TK_Complete,XE000OW373,(EBIC) Permit - Free Zone Status (SPDC),,,,0,0,0,0,0,0,0,0,,2006-06-01 00:00,2006-06-01 00:00,2009-02-15 08:01,2009-02-15 08:01,,2007-01-27 00:00,2007-01-27 00:00,,,2006-06-03 08:01,2006-06-03 08:01,,,,,PT_Normal,,,,,TfqQPjHrTNGjwrUCTMDndQ,aVMEut9iok2DNhRDQ2L57B,,,N,0,0,,,2007-02-01 02:43,2007-02-04 01:05,hbe4678,hbe4678,,,0
4563,12460744,14517,6816226,13332,0,0,N,N,N,CP_Drtn,TT_FinMile,DT_FixedDrtn,RV_OK,TK_NotStart,XE000OW374,(EBIC) Permit - Operating Permit (SIDC),,5968,6439.98333333333,0,0,0,0,0,0,0,0,2007-01-31 08:01,,,2009-02-15 08:01,2009-02-15 08:01,,2007-01-31 08:01,2007-01-31 08:01,2007-01-31 08:01,2007-01-31 08:01,2007-01-31 08:01,2007-01-31 08:01,,2009-02-15 08:01,2009-02-15 08:01,CS_MEOA,PT_Normal,,,,,mvkallqqR4m6cAdHjLZtsQ,7PNUcFQKBUmddO36Sv3vPR,,,N,0,0,,,2007-02-01 02:43,2007-02-04 01:00,hbe4678,hbe4678,2007-01-31 08:01,2007-01-31 08:01,0
4564,12460745,14517,6816226,13332,1,100,N,N,N,CP_Units,TT_Task,DT_FixedDrtn,RV_OK,TK_Complete,XE000K0110,(EBIC) Clear & Level EBIC Site (by Owner),,,,0,0,0,0,736,0,0,0,,2005-11-07 00:00,2005-12-31 00:00,2007-01-10 08:00,2007-01-10 08:00,,2007-01-27 00:00,2007-01-27 00:00,,,2005-10-29 08:00,2006-01-28 17:00,,,,,PT_Normal,,,,,HP4JdEUIQiuOOr74vOqQvg,,,,N,0,0,,,2007-02-01 02:43,2007-02-04 01:05,hbe4678,hbe4678,,,0
4565,12460746,14517,6816226,13330,0,100,N,N,N,CP_Units,TT_FinMile,DT_FixedDrtn,RV_OK,TK_Complete,EK000EB010,Client to confirm Gas Composition (EBIC),,,,0,0,0,0,0,0,0,0,,2005-11-14 08:01,2005-11-14 08:01,2009-02-15 08:01,2009-02-15 08:01,,2007-01-27 00:00,2007-01-27 00:00,,,2005-11-14 08:01,2005-11-14 08:01,,,,,PT_Normal,,,,,qXaUqdsISJq4dsuA7yIPPg,,,,N,0,0,,,2007-02-01 02:43,2007-02-04 01:05,hbe4678,hbe4678,,,0
4566,12460747,14517,6816226,13330,1,100,N,N,N,CP_Units,TT_Task,DT_FixedDUR2,RV_OK,TK_Complete,EK000EB005,Approve Project Coordination Procedure (EBIC),,,,0,0,0,,272,,0,0,,2005-03-28 08:00,2005-06-29 17:00,2006-11-28 08:01,2006-11-28 08:01,,2007-01-27 00:00,2007-01-27 00:00,,,2005-03-28 08:00,2005-05-12 17:00,,,,,PT_Normal,,,,,2hEcy2jpRd6lYXgepvhUUA,,,,N,0,0,,,2007-02-01 02:43,2007-02-04 01:05,hbe4678,hbe4678,,,0
4567,12460748,14517,6816226,13332,0,0,N,N,N,CP_Units,TT_FinMile,DT_FixedDrtn,RV_OK,TK_NotStart,XE05BM0150,05B (EBIC) 05B Liquid Cargo Birth at Port (By Owner),,752,0,0,0,0,0,0,0,0,0,2007-09-01 00:00,,,2007-12-04 08:01,2007-12-04 08:01,,2007-09-01 08:01,2007-09-01 08:01,2007-09-01 08:01,2007-09-01 08:01,2007-09-01 08:01,2007-09-01 08:01,,2007-12-04 08:01,2007-12-04 08:01,CS_MEOA,PT_Normal,,,,,9yJnT3lpS+KMnoPt3gqsxA,Kaowr4ybFU6RM+LcYHcBdR,,,N,0,0,,,2007-02-01 02:43,2007-02-04 01:00,hbe4678,hbe4678,2007-09-01 08:01,2007-09-01 08:01,0
4568,12460749,14517,6816226,13332,0,100,N,N,N,CP_Drtn,TT_FinMile,DT_FixedDrtn,RV_OK,TK_Complete,XE000OW325,(EBIC) Tie-In Construction Elec Power Supply,,,,0,0,0,0,0,0,0,0,,2006-10-31 00:00,2006-10-31 00:00,2009-02-15 08:01,2009-02-15 08:01,,2007-01-27 00:00,2007-01-27 00:00,,,2006-11-18 08:01,2006-11-18 08:01,,,,CS_ALAP,PT_Normal,,,,,RuCr5dTjQcWKTQSdPqrFtQ,,,,N,0,0,,,2007-02-01 02:43,2007-02-04 01:05,hbe4678,hbe4678,,,0
4569,12460750,14517,6816226,13332,0,0,N,N,N,CP_Drtn,TT_FinMile,DT_FixedDrtn,RV_OK,TK_NotStart,XE000OW355,(EBIC) Tie-In Municipal Water To Site,,2824,2927.98333333333,0,0,0,0,0,0,0,0,2006-12-31 00:00,,,2008-01-15 08:01,2008-01-15 08:01,,2007-01-27 08:01,2007-01-27 08:01,2007-01-27 08:01,2007-01-27 08:01,2007-01-27 08:01,2007-01-27 08:01,,2008-01-15 08:01,2008-01-15 08:01,CS_MEOA,PT_Normal,,,,,P7N9QsIzTdOjLNfCKG4zDw,,,,N,0,0,,,2007-02-01 02:43,2007-02-04 01:00,hbe4678,hbe4678,2007-01-27 08:01,2007-01-27 08:01,0
4570,12460751,14517,6816226,13332,0,0,N,N,N,CP_Drtn,TT_FinMile,DT_FixedDrtn,RV_OK,TK_NotStart,XE000OW460,(EBIC) Nitrogen Supply & Storage @ Site,,3288,3759.98333333333,0,0,0,0,0,0,0,0,2008-01-01 00:00,,,2009-02-15 08:01,2009-02-15 08:01,,2008-01-01 08:01,2008-01-01 08:01,2008-01-01 08:01,2008-01-01 08:01,2008-01-01 08:01,2008-01-01 08:01,,2009-02-15 08:01,2009-02-15 08:01,CS_MEOA,PT_Normal,,,,,zmokwhj2TXi7G5knR3W2GQ,,,,N,0,0,,,2007-02-01 02:43,2007-02-04 01:00,hbe4678,hbe4678,2008-01-01 08:01,2008-01-01 08:01,0
4571,12460752,14517,6816226,13332,0,0,N,N,N,CP_Drtn,TT_FinMile,DT_FixedDrtn,RV_OK,TK_NotStart,XE000OW360,(EBIC) Tie-In Natural Gas Line To Site,,4992,5463.98333333333,0,0,0,0,0,0,0,0,2007-06-02 00:00,,,2009-02-15 08:01,2009-02-15 08:01,,2007-06-02 08:01,2007-06-02 08:01,2007-06-02 08:01,2007-06-02 08:01,2007-06-02 08:01,2007-06-02 08:01,,2009-02-15 08:01,2009-02-15 08:01,CS_MEOA,PT_Normal,,,,,VDCssxgQRsGyWE5l5UHu5Q,,,,N,0,0,,,2007-02-01 02:43,2007-02-04 01:00,hbe4678,hbe4678,2007-06-02 08:01,2007-06-02 08:01,0
4572,12460753,14517,6816226,13332,0,0,N,N,N,CP_Drtn,TT_FinMile,DT_FixedDrtn,RV_OK,TK_NotStart,XE000OW365,"(EBIC) Tie-In Site Paved Road, Street Lighting",,88.0166666666667,0,0,0,0,0,0,0,0,0,,,,2008-03-10 08:01,2008-03-10 08:01,,2008-02-27 17:00,2008-02-27 17:00,2008-02-27 17:00,2008-02-27 17:00,2008-02-27 17:00,2008-02-27 17:00,,2008-03-10 08:01,2008-03-10 08:01,CS_ALAP,PT_Normal,,,,,K5PR88AtRKqhgDjJRLsW5w,,,,N,0,0,,,2007-02-01 02:43,2007-02-04 01:05,hbe4678,hbe4678,2008-02-27 17:00,2008-02-27 17:00,0
4573,12460754,14517,6816226,13332,0,0,N,N,N,CP_Drtn,TT_FinMile,DT_FixedDrtn,RV_OK,TK_NotStart,XE000OW375,(EBIC) Tie-In Site Electrical Power Supply,,2375.98333333333,2751.98333333333,0,0,0,0,0,0,0,0,2006-12-31 00:00,,,2007-11-19 17:00,2007-11-19 17:00,,2007-01-27 08:01,2007-01-27 08:01,2007-01-27 08:01,2007-01-27 08:01,2007-01-27 08:01,2007-01-27 08:01,,2007-11-19 17:00,2007-11-19 17:00,CS_MEOA,PT_Normal,,,,,LbV+nroQTi+P/Jksuq+vlA,,,,N,0,0,,,2007-02-01 02:43,2007-02-04 01:00,hbe4678,hbe4678,2007-01-27 08:01,2007-01-27 08:01,0
4574,12460755,14517,6816226,13332,0,0,N,N,N,CP_Drtn,TT_FinMile,DT_FixedDrtn,RV_OK,TK_NotStart,XE000OW380,(EBIC) Communication System @ Port,,5240,5711.98333333333,0,0,0,0,0,0,0,0,2007-05-02 08:01,,,2009-02-15 08:01,2009-02-15 08:01,,2007-05-02 08:01,2007-05-02 08:01,2007-05-02 08:01,2007-05-02 08:01,2007-05-02 08:01,2007-05-02 08:01,,2009-02-15 08:01,2009-02-15 08:01,CS_MEOA,PT_Normal,,,,,58xiddEwTcyjVCif70U76w,,,,N,0,0,,,2007-02-01 02:43,2007-02-04 01:00,hbe4678,hbe4678,2007-05-02 08:01,2007-05-02 08:01,0
4575,12460756,14517,6816226,13332,0,0,N,N,N,CP_Drtn,TT_FinMile,DT_FixedDrtn,RV_OK,TK_NotStart,XE000OW405,(EBIC) Tie-In Port Elec Power Supply To Substation,,6000,6471.98333333333,0,0,0,0,0,0,0,0,2006-11-30 08:01,,,2009-02-15 08:01,2009-02-15 08:01,,2007-01-27 08:01,2007-01-27 08:01,2007-01-27 08:01,2007-01-27 08:01,2007-01-27 08:01,2007-01-27 08:01,,2009-02-15 08:01,2009-02-15 08:01,CS_MEOA,PT_Normal,,,,,AB1svQgNS3Gwkqybc0h1IA,,,,N,0,0,,,2007-02-01 02:43,2007-02-04 01:00,hbe4678,hbe4678,2007-01-27 08:01,2007-01-27 08:01,0
4576,12460757,14517,6816226,13332,0,0,N,N,N,CP_Drtn,TT_FinMile,DT_FixedDrtn,RV_OK,TK_NotStart,XE000OW410,(EBIC) Tie-In Port Fire Water Supply,,5488,5959.98333333333,0,0,0,0,0,0,0,0,2007-04-01 08:01,,,2009-02-15 08:01,2009-02-15 08:01,,2007-04-01 08:01,2007-04-01 08:01,2007-04-01 08:01,2007-04-01 08:01,2007-04-01 08:01,2007-04-01 08:01,,2009-02-15 08:01,2009-02-15 08:01,CS_MEOA,PT_Normal,,,,,np6fbAYMSpuxIfrPJrp1mg,,,,N,0,0,,,2007-02-01 02:43,2007-02-04 01:00,hbe4678,hbe4678,2007-04-01 08:01,2007-04-01 08:01,0
4577,12460758,14517,6816226,13332,0,0,N,N,N,CP_Drtn,TT_FinMile,DT_FixedDrtn,RV_OK,TK_NotStart,XE000OW420,(EBIC) Tie-In Port Municipal Water Supply,,5488,5959.98333333333,0,0,0,0,0,0,0,0,2007-04-01 08:01,,,2009-02-15 08:01,2009-02-15 08:01,,2007-04-01 08:01,2007-04-01 08:01,2007-04-01 08:01,2007-04-01 08:01,2007-04-01 08:01,2007-04-01 08:01,,2009-02-15 08:01,2009-02-15 08:01,CS_MEOA,PT_Normal,,,,,WGF7nbtKSSupdFkQrFx0sg,,,,N,0,0,,,2007-02-01 02:43,2007-02-04 01:00,hbe4678,hbe4678,2007-04-01 08:01,2007-04-01 08:01,0
4578,12460759,14517,6816226,13332,0,0,N,N,N,CP_Drtn,TT_FinMile,DT_FixedDrtn,RV_OK,TK_NotStart,XE000OW425,(EBIC) Tie-In Port Natural Gas,,4992,5463.98333333333,0,0,0,0,0,0,0,0,2007-06-02 00:00,,,2009-02-15 08:01,2009-02-15 08:01,,2007-06-02 08:01,2007-06-02 08:01,2007-06-02 08:01,2007-06-02 08:01,2007-06-02 08:01,2007-06-02 08:01,,2009-02-15 08:01,2009-02-15 08:01,CS_MEOA,PT_Normal,,,,,+d121BK6SyaVJnP7ENQSpw,,,,N,0,0,,,2007-02-01 02:43,2007-02-04 01:00,hbe4678,hbe4678,2007-06-02 08:01,2007-06-02 08:01,0
4579,12460760,14517,6816228,13332,0,0,N,N,N,CP_Units,TT_FinMile,DT_FixedDrtn,RV_OK,TK_NotStart,EK000YA882,"(PC-32) Complete >90% - ISBL - Unit 02 chemical cleaning LP,MP & HP steam systems",,2336.01666666667,2808,0,0,0,0,0,0,0,0,,,,2009-02-15 08:01,2009-02-15 08:01,,2008-04-28 17:00,2008-04-28 17:00,2008-04-28 17:00,2008-04-28 17:00,2008-04-28 17:00,2008-04-28 17:00,,2009-02-15 08:01,2009-02-15 08:01,,PT_Normal,,,,,z1HyNeFcQcmF6H1u8MGMZA,,,,N,0,0,,,2007-02-01 02:43,2007-02-04 01:00,hbe4678,hbe4678,2008-04-28 17:00,2008-04-28 17:00,0
4580,12460761,14517,6816228,13330,0,100,N,N,N,CP_Units,TT_FinMile,DT_FixedDrtn,RV_OK,TK_Complete,EK000YA818,(EP-18) Vendor Acceptance of Commitment for 101-C and 102-C,,,,0,0,0,0,0,0,0,0,,2006-03-22 00:00,2006-03-22 00:00,2009-02-15 08:01,2009-02-15 08:01,,2007-01-27 00:00,2007-01-27 00:00,,,2006-03-27 08:01,2006-03-27 08:01,,,,,PT_Normal,,,,,hYdGCV7LTWmlL76s76EdQg,,,,N,0,0,,,2007-02-01 02:43,2007-02-04 01:05,hbe4678,hbe4678,,,0
4581,12460762,14517,6816228,13330,0,100,N,N,N,CP_Units,TT_FinMile,DT_FixedDrtn,RV_OK,TK_Complete,EK000YA821,"(PC-03,EP-21) Vendor Acceptance of Commitment for Methanator, 106-D",,,,0,0,0,0,0,0,0,0,,2006-03-13 08:01,2006-03-13 08:01,2009-02-15 08:01,2009-02-15 08:01,,2007-01-27 00:00,2007-01-27 00:00,,,2006-03-13 08:01,2006-03-13 08:01,,,,,PT_Normal,,,,,TRpal+2ITZ61GOi5mbG8iA,,,,N,0,0,,,2007-02-01 02:43,2007-02-04 01:05,hbe4678,hbe4678,,,0
4582,12460763,14517,6816228,13330,1,0,N,N,N,CP_Units,TT_Task,DT_FixedDrtn,RV_OK,TK_NotStart,EK000CS040,Issue Operation & Maintenance Manuals for Review,,1720,0,480,0,0,0,480,0,0,0,,,,2007-11-26 08:00,2008-02-15 17:00,,2007-01-29 08:00,2007-04-20 17:00,2007-01-29 08:00,2007-04-20 17:00,2007-01-29 08:00,2007-04-20 17:00,,2007-11-26 08:00,2008-02-15 17:00,,PT_Normal,,,,,rbvQ+4YzTMWpMGsGOj9KBw,rIJTuPQqm0WSYtxZ0GVWiR,,,N,0,0,,,2007-02-01 02:43,2007-02-01 02:43,hbe4678,hbe4678,2007-01-29 08:00,2007-04-20 17:00,480
4583,12460764,14517,6816228,13330,1,0,N,N,N,CP_Units,TT_Task,DT_FixedDrtn,RV_OK,TK_NotStart,EK000CS050,Issue Operation & Maintenance Manuals IFC,,3000,0,720,0,0,0,720,0,0,0,,,,2008-10-13 08:00,2009-02-13 17:00,,2007-05-07 08:00,2007-09-07 17:00,2007-05-07 08:00,2007-09-07 17:00,2007-05-07 08:00,2007-09-07 17:00,,2008-10-13 08:00,2009-02-13 17:00,,PT_Normal,,,,,zb3jXwNpSkaokFEi9Qqdhg,0nmNIscU0kKgrHpZ8V3T5h,,,N,0,0,,,2007-02-01 02:43,2007-02-01 02:43,hbe4678,hbe4678,2007-05-07 08:00,2007-09-07 17:00,720
4584,12460765,14517,6816228,13330,1,0,N,N,N,CP_Units,TT_Task,DT_FixedDrtn,RV_OK,TK_NotStart,EK000CS060,Issue Proposed Operating Training Program for Review,,1720,0,320,0,0,0,320,0,0,0,,,,2007-12-24 08:00,2008-02-15 17:00,,2007-02-26 08:00,2007-04-20 17:00,2007-02-26 08:00,2007-04-20 17:00,2007-02-26 08:00,2007-04-20 17:00,,2007-12-24 08:00,2008-02-15 17:00,,PT_Normal,,,,,itQmJ5ZCSpiVXN+sBhM5Sg,0nmNIscU0kKgrHpZ8V3T5h,,,N,0,0,,,2007-02-01 02:43,2007-02-01 02:43,hbe4678,hbe4678,2007-02-26 08:00,2007-04-20 17:00,320
4585,12460766,14517,6816228,13330,1,0,N,N,N,CP_Units,TT_Task,DT_FixedDrtn,RV_OK,TK_NotStart,EK000CS070,Issue Operating Training Program,,3000,0,320,0,0,0,320,0,0,0,,,,2008-11-10 08:00,2009-01-02 17:00,,2007-06-04 08:00,2007-07-27 17:00,2007-06-04 08:00,2007-07-27 17:00,2007-06-04 08:00,2007-07-27 17:00,,2008-11-10 08:00,2009-01-02 17:00,,PT_Normal,,,,,IczDJiVgTk6c8iQRGq5wxg,1bscfFrwykKIVC4OL5AX+h,,,N,0,0,,,2007-02-01 02:43,2007-02-01 02:43,hbe4678,hbe4678,2007-06-04 08:00,2007-07-27 17:00,320
4586,12460767,14517,6816228,13332,0,100,N,N,N,CP_Units,TT_FinMile,DT_FixedDrtn,RV_OK,TK_Complete,EK000YA000,"(PC-01,EP-01, TLA-01) Receive Owner's """"Notice to Proceed""""",,,,0,0,0,0,0,0,0,0,,2006-02-16 08:01,2006-02-16 08:01,2006-11-21 08:01,2006-11-21 08:01,,2007-01-27 00:00,2007-01-27 00:00,,,2006-02-16 08:01,2006-02-16 08:01,,,,,PT_Normal,,,,,IxSVH2aEQYWbIP8vIGMG+Q,FM1W1//o4ky1mz1AokRrex,,,Y,0,0,,,2007-02-01 02:43,2007-02-04 01:05,hbe4678,hbe4678,,,0
4587,12460768,14517,6816228,13332,0,0,N,N,N,CP_Units,TT_FinMile,DT_FixedDrtn,RV_OK,TK_NotStart,EK000YA890,(PC-27) Complete >10% - ISBL - Unit 02 Hot & Cold Pipe Insulation,,864,0,0,0,0,0,0,0,0,0,,,,2008-03-19 08:01,2008-03-19 08:01,,2007-12-02 08:01,2007-12-02 08:01,2007-12-02 08:01,2007-12-02 08:01,2007-12-02 08:01,2007-12-02 08:01,,2008-03-19 08:01,2008-03-19 08:01,CS_ALAP,PT_Normal,,,,,/H+nczdIQliiqah1IWa9sg,V7jpekFEm0qNYBBVASSTcg,,,N,0,0,,,2007-02-01 02:43,2007-02-04 01:05,hbe4678,hbe4678,2007-12-02 08:01,2007-12-02 08:01,0
4588,12460769,14517,6816228,13332,0,0,N,N,N,CP_Units,TT_FinMile,DT_FixedDrtn,RV_OK,TK_NotStart,EK000YA855,"(EP-45) Deliver Air Compressor, 101-J, and Feed Gas Compressor, 102-J, to site",,5440,5911.98333333333,0,0,0,0,0,0,0,0,,,,2009-02-15 08:01,2009-02-15 08:01,,2007-04-07 08:01,2007-04-07 08:01,2007-04-07 08:01,2007-04-07 08:01,2007-04-07 08:01,2007-04-07 08:01,,2009-02-15 08:01,2009-02-15 08:01,,PT_Normal,,,,,JsgO+K/jQtuiONijLXzcBQ,,,,N,0,0,,,2007-02-01 02:43,2007-02-04 01:00,hbe4678,hbe4678,2007-04-07 08:01,2007-04-07 08:01,0
4589,12460770,14517,6816228,13332,0,0,N,N,N,CP_Units,TT_FinMile,DT_FixedDrtn,RV_OK,TK_NotStart,EK000YA856,(EP-43) Deliver majority of tagged field Instruments,,5160,5631.98333333333,0,0,0,0,0,0,0,0,,,,2009-02-15 08:01,2009-02-15 08:01,,2007-05-12 08:01,2007-05-12 08:01,2007-05-12 08:01,2007-05-12 08:01,2007-05-12 08:01,2007-05-12 08:01,,2009-02-15 08:01,2009-02-15 08:01,,PT_Normal,,,,,F+gw0OPfTsKvXEYEz/rbdw,,,,N,0,0,,,2007-02-01 02:43,2007-02-04 01:00,hbe4678,hbe4678,2007-05-12 08:01,2007-05-12 08:01,0
4590,12460771,14517,6816228,13332,0,0,N,N,N,CP_Units,TT_FinMile,DT_FixedDrtn,RV_OK,TK_NotStart,EK000YA857,(EP-46) Complete >90% delivery of all ISBL long lead equipment (except 103-J and 105-J) to site,,4288.01666666667,4760,0,0,0,0,0,0,0,0,,,,2009-02-15 08:01,2009-02-15 08:01,,2007-08-28 17:00,2007-08-28 17:00,2007-08-28 17:00,2007-08-28 17:00,2007-08-28 17:00,2007-08-28 17:00,,2009-02-15 08:01,2009-02-15 08:01,,PT_Normal,,,,,6kSWRZBgSMmN2XI5TaDIKg,,,,N,0,0,,,2007-02-01 02:43,2007-02-04 01:00,hbe4678,hbe4678,2007-08-28 17:00,2007-08-28 17:00,0
4591,12460772,14517,6816228,13330,0,100,N,N,N,CP_Units,TT_FinMile,DT_FixedDrtn,RV_OK,TK_Complete,EK000YA814,"(EP-15) Vendor Acceptance of Commitment for 101-J, 102-J, 103-J & 105-J",,,,0,0,0,0,0,0,0,0,,2006-03-13 08:01,2006-03-13 08:01,2009-02-15 08:01,2009-02-15 08:01,,2007-01-27 00:00,2007-01-27 00:00,,,2006-03-13 08:01,2006-03-13 08:01,,,,,PT_Normal,,,,,RPJ7rT5UR5+uSv2ZFiDG6w,,,,N,0,0,,,2007-02-01 02:43,2007-02-04 01:05,hbe4678,hbe4678,,,0
4592,12460773,14517,6816228,13329,0,100,N,N,N,CP_Units,TT_FinMile,DT_FixedDrtn,RV_OK,TK_Complete,EK000YA815,(PC-05) Award Contract - Ammonia Storage Tanks - 2101-F/2102,,,,0,0,0,0,0,0,0,0,,2006-02-03 00:00,2006-02-03 00:00,2009-02-15 08:01,2009-02-15 08:01,,2007-01-27 00:00,2007-01-27 00:00,,,2006-03-25 08:01,2006-03-25 08:01,,,,,PT_Normal,,,,,sy8HWvO5QjSpQc1+xT/HNg,,,,N,0,0,,,2007-02-01 02:43,2007-02-04 01:05,hbe4678,hbe4678,,,0
4593,12460774,14517,6816228,13330,0,100,N,N,N,CP_Units,TT_FinMile,DT_FixedDrtn,RV_OK,TK_Complete,EK000YA816,(EP-16) Vendor Acceptance of Commitment for 105-D,,,,0,0,0,0,0,0,0,0,,2006-03-13 08:01,2006-03-13 08:01,2009-02-15 08:01,2009-02-15 08:01,,2007-01-27 00:00,2007-01-27 00:00,,,2006-03-13 08:01,2006-03-13 08:01,,,,,PT_Normal,,,,,y9jhU64xTLWuvLytjNvWUA,,,,N,0,0,,,2007-02-01 02:43,2007-02-04 01:05,hbe4678,hbe4678,,,0
4594,12460775,14517,6816228,13330,0,100,N,N,N,CP_Units,TT_FinMile,DT_FixedDrtn,RV_OK,TK_Complete,EK000YA817,"(EP-17) Vendor Acceptance of Commitment for High Pressure Boiler Feed Water pumps, 104-J & 107-J",,,,0,0,0,0,0,0,0,0,,2006-03-13 08:01,2006-03-13 08:01,2009-02-15 08:01,2009-02-15 08:01,,2007-01-27 00:00,2007-01-27 00:00,,,2006-03-13 08:01,2006-03-13 08:01,,,,,PT_Normal,,,,,19/LE8J+TCO3sdbXkUe22g,,,,N,0,0,,,2007-02-01 02:43,2007-02-04 01:05,hbe4678,hbe4678,,,0
4595,12460776,14517,6816228,13330,0,100,N,N,N,CP_Units,TT_FinMile,DT_FixedDrtn,RV_OK,TK_Complete,EK000YA819,(EP-19) Vendor Acceptance of Commitment for 120-C,,,,0,0,0,0,0,0,0,0,,2006-03-13 08:01,2006-03-13 08:01,2009-02-15 08:01,2009-02-15 08:01,,2007-01-27 00:00,2007-01-27 00:00,,,2006-03-13 08:01,2006-03-13 08:01,,,,,PT_Normal,,,,,wWoF/JRiTGi7EBIGyElMPg,,,,N,0,0,,,2007-02-01 02:43,2007-02-04 01:05,hbe4678,hbe4678,,,0
4596,12460777,14517,6816228,13330,0,100,N,N,N,CP_Units,TT_FinMile,DT_FixedDrtn,RV_OK,TK_Complete,EK000YA820,(EP-20) Vendor Acceptance of Commitment for 101-B,,,,0,0,0,0,0,0,0,0,,2005-10-21 00:00,2005-10-21 00:00,2009-02-15 08:01,2009-02-15 08:01,,2007-01-27 00:00,2007-01-27 00:00,,,2006-03-27 08:01,2006-03-27 08:01,,,,,PT_Normal,,,,,gyIdTrEUR0OpxqZbwd/wGA,,,,N,0,0,,,2007-02-01 02:43,2007-02-04 01:05,hbe4678,hbe4678,,,0
4597,12460778,14517,6816228,13332,0,100,N,N,N,CP_Units,TT_FinMile,DT_FixedDrtn,RV_OK,TK_Complete,EK000YA825,"(EP-24) Vendor Acceptance of Commitment for Demineralizer, 2001-U, & remaining utility equipment",,,,0,0,0,0,0,0,0,0,,2006-04-17 00:00,2006-04-17 00:00,2009-02-15 08:01,2009-02-15 08:01,,2007-01-27 00:00,2007-01-27 00:00,,,2006-04-29 08:01,2006-04-29 08:01,,,,,PT_Normal,,,,,pKnuWfhFTMKAalSyTf4cRg,,,,N,0,0,,,2007-02-01 02:43,2007-02-04 01:05,hbe4678,hbe4678,,,0
4598,12460779,14517,6816228,13332,0,100,N,N,N,CP_Units,TT_FinMile,DT_FixedDrtn,RV_OK,TK_Complete,EK000YA827,"(PC-04) Issue Cooling Tower,Item No. 2101-U Purchase Order",,,,0,0,0,0,0,0,0,0,,2005-10-04 00:00,2005-10-04 00:00,2009-02-15 08:01,2009-02-15 08:01,,2007-01-27 00:00,2007-01-27 00:00,,,2006-03-25 08:01,2006-03-25 08:01,,,,,PT_Normal,,,,,nqMj4wMPTTyPmvzDbYSflA,,,,N,0,0,,,2007-02-01 02:43,2007-02-04 01:05,hbe4678,hbe4678,,,0
4599,12460780,14517,6816228,13332,0,100,N,N,N,CP_Units,TT_FinMile,DT_FixedDrtn,RV_OK,TK_Complete,EK000YA828,(EP-30) Vendor Acceptance of Commitment for Electrical 20 MVA Transformers,,,,0,0,0,0,0,0,0,0,,2006-07-21 00:00,2006-07-21 00:00,2009-02-15 08:01,2009-02-15 08:01,,2007-01-27 00:00,2007-01-27 00:00,,,2006-12-22 17:00,2006-12-22 17:00,,,,,PT_Normal,,,,,oOYo3N0iTeWArQVp2aG74Q,,,,N,0,0,,,2007-02-01 02:43,2007-02-04 01:05,hbe4678,hbe4678,,,0
4600,12460781,14517,6816228,13332,0,100,N,N,N,CP_Units,TT_FinMile,DT_FixedDrtn,RV_OK,TK_Complete,EK000YA830,(EP-25) Vendor Acceptance of Commitment for Kellogg Advanced Ammonia Process (KAAP) Catalyst,,,,0,0,0,0,0,0,0,0,,2006-05-12 00:00,2006-05-12 00:00,2009-02-15 08:01,2009-02-15 08:01,,2007-01-27 00:00,2007-01-27 00:00,,,2006-06-01 08:01,2006-06-01 08:01,,,,,PT_Normal,,,,,hyGXY3gWTl2zItpnYdSdZA,,,,N,0,0,,,2007-02-01 02:43,2007-02-04 01:05,hbe4678,hbe4678,,,0
4601,12460782,14517,6816228,13332,0,100,N,N,N,CP_Units,TT_FinMile,DT_FixedDrtn,RV_OK,TK_Complete,EK000YA834,"(PC-06,EP-28) Issue ISBL Plot Plan For Construction (IFC)",,,,0,0,0,0,0,0,0,0,,2006-04-28 00:00,2006-04-28 00:00,2009-02-15 08:01,2009-02-15 08:01,,2007-01-27 00:00,2007-01-27 00:00,,,2006-06-03 08:01,2006-06-03 08:01,,,,,PT_Normal,,,,,nhK1oSifQBy49Pnitj+bQQ,,,,N,0,0,,,2007-02-01 02:43,2007-02-04 01:05,hbe4678,hbe4678,,,0
4602,12460783,14517,6816228,13332,0,100,N,N,N,CP_Units,TT_FinMile,DT_FixedDrtn,RV_OK,TK_Complete,EK000YA836,(PC-07) Issue 101-B -Primary Reformer Erection Drawings,,,,0,0,0,0,0,0,0,0,,2006-06-27 00:00,2006-06-27 00:00,2009-02-15 08:01,2009-02-15 08:01,,2007-01-27 00:00,2007-01-27 00:00,,,2006-07-01 08:01,2006-07-01 08:01,,,,,PT_Normal,,,,,9vopYCb3RLuKoQnOdY0lvw,,,,N,0,0,,,2007-02-01 02:43,2007-02-04 01:05,hbe4678,hbe4678,,,0
4603,12460784,14517,6816228,13330,0,100,N,N,N,CP_Units,TT_FinMile,DT_FixedDrtn,RV_OK,TK_Complete,EK000YA803,"(PC-02,EP-04) Issue Project Specific Quality Control Manual",,,,0,0,0,0,0,0,0,0,,2005-11-30 00:00,2005-11-30 00:00,2009-02-15 08:01,2009-02-15 08:01,,2007-01-27 00:00,2007-01-27 00:00,,,2005-12-19 08:01,2005-12-19 08:01,,,,,PT_Normal,,,,,/dSTlXTFTdm5OM3CUSVWSg,,,,N,0,0,,,2007-02-01 02:43,2007-02-04 01:05,hbe4678,hbe4678,,,0
4604,12460785,14517,6816228,13330,0,100,N,N,N,CP_Units,TT_FinMile,DT_FixedDrtn,RV_OK,TK_Complete,EK000YA812,"(EP-13) Vendor Acceptance of Commitment for Boiler Package, 2002-U",,,,0,0,0,0,0,0,0,0,,2005-10-06 00:00,2005-10-06 00:00,2009-02-15 08:01,2009-02-15 08:01,,2007-01-27 00:00,2007-01-27 00:00,,,2005-09-26 08:01,2005-09-26 08:01,,,,,PT_Normal,,,,,2Co5HxKOQ4+NNh2qMh90ew,,,,N,0,0,,,2007-02-01 02:43,2007-02-04 01:05,hbe4678,hbe4678,,,0
4605,12460786,14517,6816228,13332,0,100,N,N,N,CP_Units,TT_FinMile,DT_FixedDrtn,RV_OK,TK_Complete,EK000YA858,"(EP-38) Deliver Syn Gas Compressor, 103-J, and Ammonia Refrig Compressor, 105-J, to site",,,,0,0,0,0,0,0,0,0,,2006-12-14 00:00,2006-12-14 00:00,2009-02-15 08:01,2009-02-15 08:01,,2007-01-27 00:00,2007-01-27 00:00,,,2007-01-27 08:01,2007-01-27 08:01,,,,,PT_Normal,,,,,nH2hnx8hRHu8Gcn2ykA/qw,,,,N,0,0,,,2007-02-01 02:43,2007-02-04 01:05,hbe4678,hbe4678,,,0
4606,12460787,14517,6816228,13332,0,0,N,N,N,CP_Units,TT_FinMile,DT_FixedDrtn,RV_OK,TK_NotStart,EK000YA859,(PC-11) Complete >90% - ISBL - Unit 02 Equipment Foundation,,5312.01666666667,5784,0,0,0,0,0,0,0,0,,,,2009-02-15 08:01,2009-02-15 08:01,,2007-04-22 17:00,2007-04-22 17:00,2007-04-22 17:00,2007-04-22 17:00,2007-04-22 17:00,2007-04-22 17:00,,2009-02-15 08:01,2009-02-15 08:01,,PT_Normal,,,,,ENLQSnHfSDytydCq3icgZg,,,,N,0,0,,,2007-02-01 02:43,2007-02-04 01:00,hbe4678,hbe4678,2007-04-22 17:00,2007-04-22 17:00,0
4607,12460788,14517,6816228,13332,0,0,N,N,N,CP_Units,TT_FinMile,DT_FixedDrtn,RV_OK,TK_NotStart,EK000YA881,(PC-37) Mechanical Completion - ISBL - Unit 02 -Ammonia,,2416.01666666667,0,0,0,0,0,0,0,0,0,,,,2009-02-15 08:01,2009-02-15 08:01,,2008-04-18 17:00,2008-04-18 17:00,2008-04-18 17:00,2008-04-18 17:00,2008-04-18 17:00,2008-04-18 17:00,,2009-02-15 08:01,2009-02-15 08:01,,PT_Normal,,,,,HREkmjhHTZmDIwmCDdFXJw,,,,N,0,0,,,2007-02-01 02:43,2007-02-04 01:00,hbe4678,hbe4678,2008-04-18 17:00,2008-04-18 17:00,0
4608,12460789,14517,6816228,13332,0,0,N,N,N,CP_Units,TT_FinMile,DT_FixedDrtn,RV_OK,TK_NotStart,EK000YA872,(EP-47) Deliver Converter Catalyst to site,,2952.01666666667,3424,0,0,0,0,0,0,0,0,,,,2009-02-15 08:01,2009-02-15 08:01,,2008-02-11 17:00,2008-02-11 17:00,2008-02-11 17:00,2008-02-11 17:00,2008-02-11 17:00,2008-02-11 17:00,,2009-02-15 08:01,2009-02-15 08:01,,PT_Normal,,,,,rsQdo6exQvKzhhXs0t7DnA,,,,N,0,0,,,2007-02-01 02:43,2007-02-04 01:00,hbe4678,hbe4678,2008-02-11 17:00,2008-02-11 17:00,0
4609,12460790,14517,6816228,13332,0,0,N,N,N,CP_Units,TT_FinMile,DT_FixedDrtn,RV_OK,TK_NotStart,EK000YA873,(PC-21) Install DCS in Main Control Building,,3944.01666666667,4416,0,0,0,0,0,0,0,0,,,,2009-02-15 08:01,2009-02-15 08:01,,2007-10-10 17:00,2007-10-10 17:00,2007-10-10 17:00,2007-10-10 17:00,2007-10-10 17:00,2007-10-10 17:00,,2009-02-15 08:01,2009-02-15 08:01,,PT_Normal,,,,,TI5dl23WQl2Z0dAEaSiwww,,,,N,0,0,,,2007-02-01 02:43,2007-02-04 01:00,hbe4678,hbe4678,2007-10-10 17:00,2007-10-10 17:00,0
4610,12460791,14517,6816228,13332,0,0,N,N,N,CP_Units,TT_FinMile,DT_FixedDrtn,RV_OK,TK_NotStart,EK000YA874,"(PC-31) Complete >90% - ISBL - Unit 02 - LB Greater than 2"""" piping installation",,2744.01666666667,3216,0,0,0,0,0,0,0,0,,,,2009-02-15 08:01,2009-02-15 08:01,,2008-03-08 17:00,2008-03-08 17:00,2008-03-08 17:00,2008-03-08 17:00,2008-03-08 17:00,2008-03-08 17:00,,2009-02-15 08:01,2009-02-15 08:01,,PT_Normal,,,,,W7FopzF/So2UPHWsnmf9jA,,,,N,0,0,,,2007-02-01 02:43,2007-02-04 01:00,hbe4678,hbe4678,2008-03-08 17:00,2008-03-08 17:00,0
4611,12460792,14517,6816228,13332,0,0,N,N,N,CP_Units,TT_FinMile,DT_FixedDrtn,RV_OK,TK_NotStart,EK000YA875,(PC-35) Complete >90% - ISBL - Unit 02 Instrument loops checked,,2416.01666666667,2888,0,0,0,0,0,0,0,0,,,,2009-02-15 08:01,2009-02-15 08:01,,2008-04-18 17:00,2008-04-18 17:00,2008-04-18 17:00,2008-04-18 17:00,2008-04-18 17:00,2008-04-18 17:00,,2009-02-15 08:01,2009-02-15 08:01,,PT_Normal,,,,,Y/iPB6KdRbqQyBrwLPAj/g,,,,N,0,0,,,2007-02-01 02:43,2007-02-04 01:00,hbe4678,hbe4678,2008-04-18 17:00,2008-04-18 17:00,0
4612,12460793,14517,6816228,13332,0,0,N,N,N,CP_Units,TT_FinMile,DT_FixedDrtn,RV_OK,TK_NotStart,EK000YA876,"(PC-23) Complete >90% - OSBL - Unit 01 & 03 pipe testing -visual,service,hydrostatic,or pneumatic testing",,3744.01666666667,4216,0,0,0,0,0,0,0,0,,,,2009-02-15 08:01,2009-02-15 08:01,,2007-11-04 17:00,2007-11-04 17:00,2007-11-04 17:00,2007-11-04 17:00,2007-11-04 17:00,2007-11-04 17:00,,2009-02-15 08:01,2009-02-15 08:01,,PT_Normal,,,,,TXjt6YXTS2K5RueAS2aiow,,,,N,0,0,,,2007-02-01 02:43,2007-02-04 01:00,hbe4678,hbe4678,2007-11-04 17:00,2007-11-04 17:00,0
4613,12460794,14517,6816228,13332,0,0,N,N,N,CP_Units,TT_FinMile,DT_FixedDrtn,RV_OK,TK_NotStart,EK000YA878,(PC-28) Mechanical Completion - OSBL - Unit 01 & 03 Utilities &Plant site Offsites,,3016.01666666667,3488,0,0,0,0,0,0,0,0,,,,2009-02-15 08:01,2009-02-15 08:01,,2008-02-03 17:00,2008-02-03 17:00,2008-02-03 17:00,2008-02-03 17:00,2008-02-03 17:00,2008-02-03 17:00,,2009-02-15 08:01,2009-02-15 08:01,,PT_Normal,,,,,YQ/+QMVrT16HTbdN4Oa+KA,,,,N,0,0,,,2007-02-01 02:43,2007-02-04 01:00,hbe4678,hbe4678,2008-02-03 17:00,2008-02-03 17:00,0
4614,12460795,14517,6816228,13332,0,0,N,N,N,CP_Units,TT_FinMile,DT_FixedDrtn,RV_OK,TK_NotStart,EK000YA879,(PC-24) Commence Pre-commissioning Activities,,3136,3607.98333333333,0,0,0,0,0,0,0,0,,,,2009-02-15 08:01,2009-02-15 08:01,,2008-01-20 08:01,2008-01-20 08:01,2008-01-20 08:01,2008-01-20 08:01,2008-01-20 08:01,2008-01-20 08:01,,2009-02-15 08:01,2009-02-15 08:01,,PT_Normal,,,,,M3npmp5WS+iySVZGuow8jg,,,,N,0,0,,,2007-02-01 02:43,2007-02-04 01:00,hbe4678,hbe4678,2008-01-20 08:01,2008-01-20 08:01,0
4615,12460796,14517,6816228,13332,0,0,N,N,N,CP_Units,TT_FinMile,DT_FixedDrtn,RV_OK,TK_NotStart,EK000YA880,(PC-38) Feed Gas into Ammonia Unit,,2000,2471.98333333333,0,0,0,0,0,0,0,0,,,,2009-02-15 08:01,2009-02-15 08:01,,2008-06-10 08:01,2008-06-10 08:01,2008-06-10 08:01,2008-06-10 08:01,2008-06-10 08:01,2008-06-10 08:01,,2009-02-15 08:01,2009-02-15 08:01,,PT_Normal,,,,,Qz/sYC/DQtaVTRO/EWS1EA,,,,N,0,0,,,2007-02-01 02:43,2007-02-04 01:00,hbe4678,hbe4678,2008-06-10 08:01,2008-06-10 08:01,0
4616,12460797,14517,6816228,13332,0,0,N,N,N,CP_Units,TT_FinMile,DT_FixedDrtn,RV_OK,TK_NotStart,EK000YA884,(PC-40) Begin Production Test run,,440.016666666667,0,0,0,0,0,0,0,0,0,,,,2008-08-25 08:01,2008-08-25 08:01,,2008-06-30 17:00,2008-06-30 17:00,2008-06-30 17:00,2008-06-30 17:00,2008-06-30 17:00,2008-06-30 17:00,,2008-08-25 08:01,2008-08-25 08:01,,PT_Normal,,,,,NVm9kxwTRZS7SJoYoNZ0ZQ,,,,N,0,0,,,2007-02-01 02:43,2007-02-04 01:00,hbe4678,hbe4678,2008-06-30 17:00,2008-06-30 17:00,0
4617,12460798,14517,6816228,13332,0,0,N,N,N,CP_Units,TT_FinMile,DT_FixedDrtn,RV_OK,TK_NotStart,EK000YA885,(PC-42) Complete Production Test run,,1560.01666666667,2032,0,0,0,0,0,0,0,0,,,,2009-02-15 08:01,2009-02-15 08:01,,2008-08-03 17:00,2008-08-03 17:00,2008-08-03 17:00,2008-08-03 17:00,2008-08-03 17:00,2008-08-03 17:00,,2009-02-15 08:01,2009-02-15 08:01,,PT_Normal,,,,,p6Y3JJkzTbeTihHQuPujgQ,,,,N,0,0,,,2007-02-01 02:43,2007-02-04 01:00,hbe4678,hbe4678,2008-08-03 17:00,2008-08-03 17:00,0
4618,12460799,14517,6816228,13332,0,0,N,N,N,CP_Units,TT_FinMile,DT_FixedDrtn,RV_OK,TK_NotStart,EK000YA837,(PC-36) Complete >90% - Site Preparation within the EBIC Plant Site boundary wall,,2824.01666666667,3296,0,0,0,0,0,0,0,0,,,,2009-02-15 08:01,2009-02-15 08:01,,2008-02-27 17:00,2008-02-27 17:00,2008-02-27 17:00,2008-02-27 17:00,2008-02-27 17:00,2008-02-27 17:00,,2009-02-15 08:01,2009-02-15 08:01,,PT_Normal,,,,,8Zzt6sdGQOK/f7aw4PsVmA,,,,N,0,0,,,2007-02-01 02:43,2007-02-04 01:00,hbe4678,hbe4678,2008-02-27 17:00,2008-02-27 17:00,0
4619,12460800,14517,6816228,13332,0,0,N,N,N,CP_Units,TT_FinMile,DT_FixedDrtn,RV_OK,TK_NotStart,EK000YA842,(PC-10) Complete >90% - Ammonia Tanks - 2101-F/2102-F Foundation,,4632.01666666667,5104,0,0,0,0,0,0,0,0,,,,2009-02-15 08:01,2009-02-15 08:01,,2007-07-16 17:00,2007-07-16 17:00,2007-07-16 17:00,2007-07-16 17:00,2007-07-16 17:00,2007-07-16 17:00,,2009-02-15 08:01,2009-02-15 08:01,,PT_Normal,,,,,F1RF2/WZQbWUyAxdUH0q2Q,,,,N,0,0,,,2007-02-01 02:43,2007-02-04 01:00,hbe4678,hbe4678,2007-07-16 17:00,2007-07-16 17:00,0
4620,12460801,14517,6816228,13332,0,0,N,N,N,CP_Units,TT_FinMile,DT_FixedDrtn,RV_OK,TK_NotStart,EK000YA843,(PC-18) Complete >90% Bldg No. 2604-K Workshop / Warehouse Erection,,6000,6471.98333333333,0,0,0,0,0,0,0,0,,,,2009-02-15 08:01,2009-02-15 08:01,,2007-01-27 08:01,2007-01-27 08:01,2007-01-27 08:01,2007-01-27 08:01,2007-01-27 08:01,2007-01-27 08:01,,2009-02-15 08:01,2009-02-15 08:01,,PT_Normal,,,,,gOU2V3U9SjuuCGMp5GJKjA,,,,N,0,0,,,2007-02-01 02:43,2007-02-04 01:00,hbe4678,hbe4678,2007-01-27 08:01,2007-01-27 08:01,0
4621,12460802,14517,6816228,13332,0,0,N,N,N,CP_Units,TT_FinMile,DT_FixedDrtn,RV_OK,TK_NotStart,EK000YA844,(EP-40) Complete Fabrication of 101-F Steam Drum,,5664.01666666667,6136,0,0,0,0,0,0,0,0,,,,2009-02-15 08:01,2009-02-15 08:01,,2007-03-09 17:00,2007-03-09 17:00,2007-03-09 17:00,2007-03-09 17:00,2007-03-09 17:00,2007-03-09 17:00,,2009-02-15 08:01,2009-02-15 08:01,,PT_Normal,,,,,hojGZQFuTkKqD2tnz9XAFQ,,,,N,0,0,,,2007-02-01 02:43,2007-02-04 01:00,hbe4678,hbe4678,2007-03-09 17:00,2007-03-09 17:00,0
4622,12460803,14517,6816228,13332,0,100,N,N,N,CP_Units,TT_FinMile,DT_FixedDrtn,RV_OK,TK_Complete,EK000YA845,"(PC-08) Complete >10% - ISBL -Unit 02 - Pipe Spool Fabrication,>2 Inch Diameter",,,,0,0,0,0,0,0,0,0,,2006-12-16 08:01,2006-12-16 08:01,2009-02-15 08:01,2009-02-15 08:01,,2007-01-27 08:00,2007-01-27 08:00,,,2006-12-16 08:01,2006-12-16 08:01,,,,,PT_Normal,,,,,IanGcaIpQHWFV6LcbBxjcw,,,,N,0,0,,,2007-02-01 02:43,2007-02-04 01:05,hbe4678,hbe4678,,,0
4623,12460804,14517,6816228,13332,0,0,N,N,N,CP_Units,TT_FinMile,DT_FixedDrtn,RV_OK,TK_NotStart,EK000YA846,(EP-41) Issue Proposed Operator Training Program,,4544.01666666667,5016,0,0,0,0,0,0,0,0,,,,2009-02-15 08:01,2009-02-15 08:01,,2007-07-27 17:00,2007-07-27 17:00,2007-07-27 17:00,2007-07-27 17:00,2007-07-27 17:00,2007-07-27 17:00,,2009-02-15 08:01,2009-02-15 08:01,,PT_Normal,,,,,If0/DJzJSiq2sm1Tu93Tbg,,,,N,0,0,,,2007-02-01 02:43,2007-02-04 01:00,hbe4678,hbe4678,2007-07-27 17:00,2007-07-27 17:00,0
4624,12460805,14517,6816228,13332,0,0,N,N,N,CP_Units,TT_FinMile,DT_FixedDrtn,RV_OK,TK_NotStart,EK000YA850,"(PC-15) Complete >90% ISBL Unit 02 aboveground LB ,Greater than 2"""" pipe fabrication",,4784,5255.98333333333,0,0,0,0,0,0,0,0,,,,2009-02-15 08:01,2009-02-15 08:01,,2007-06-28 08:01,2007-06-28 08:01,2007-06-28 08:01,2007-06-28 08:01,2007-06-28 08:01,2007-06-28 08:01,,2009-02-15 08:01,2009-02-15 08:01,,PT_Normal,,,,,WQctzjETQdKC9Jcl134ZmQ,,,,N,0,0,,,2007-02-01 02:43,2007-02-04 01:00,hbe4678,hbe4678,2007-06-28 08:01,2007-06-28 08:01,0
4625,12460806,14517,6816228,13332,0,0,N,N,N,CP_Units,TT_FinMile,DT_FixedDrtn,RV_OK,TK_NotStart,EK000YA851,(PC-12) Complete >90% - ISBL - Unit 02 Underground Piping Fabrication and installation,,5512.01666666667,5984,0,0,0,0,0,0,0,0,,,,2009-02-15 08:01,2009-02-15 08:01,,2007-03-28 17:00,2007-03-28 17:00,2007-03-28 17:00,2007-03-28 17:00,2007-03-28 17:00,2007-03-28 17:00,,2009-02-15 08:01,2009-02-15 08:01,,PT_Normal,,,,,YwJhed9LR5SZBR5R6Hpplg,,,,N,0,0,,,2007-02-01 02:43,2007-02-04 01:00,hbe4678,hbe4678,2007-03-28 17:00,2007-03-28 17:00,0
4626,12460807,14517,6816228,13332,0,0,N,N,N,CP_Units,TT_FinMile,DT_FixedDrtn,RV_OK,TK_NotStart,EK000YA852,"(EP-42) Deliver BFW pumps, 104-J, & Lean Solution pumps, 107-J, to site",,5128.01666666667,5600,0,0,0,0,0,0,0,0,,,,2009-02-15 08:01,2009-02-15 08:01,,2007-05-15 17:00,2007-05-15 17:00,2007-05-15 17:00,2007-05-15 17:00,2007-05-15 17:00,2007-05-15 17:00,,2009-02-15 08:01,2009-02-15 08:01,,PT_Normal,,,,,liuaDzJqRFuA6M1eYm+zWg,,,,N,0,0,,,2007-02-01 02:43,2007-02-04 01:00,hbe4678,hbe4678,2007-05-15 17:00,2007-05-15 17:00,0
4627,12460808,14517,6816228,13332,0,0,N,N,N,CP_Units,TT_FinMile,DT_FixedDrtn,RV_OK,TK_NotStart,EK000YA854,(PC-13) Complete >90% - OSBL Unit 01 & 03 Underground Piping Fabrication & Installation,,5288.01666666667,5760,0,0,0,0,0,0,0,0,,,,2009-02-15 08:01,2009-02-15 08:01,,2007-04-25 17:00,2007-04-25 17:00,2007-04-25 17:00,2007-04-25 17:00,2007-04-25 17:00,2007-04-25 17:00,,2009-02-15 08:01,2009-02-15 08:01,,PT_Normal,,,,,/yytHQ9dRCWw9fMsanGfBQ,,,,N,0,0,,,2007-02-01 02:43,2007-02-04 01:00,hbe4678,hbe4678,2007-04-25 17:00,2007-04-25 17:00,0
4628,12460809,14517,6816228,13332,0,0,N,N,N,CP_Units,TT_FinMile,DT_FixedDrtn,RV_OK,TK_NotStart,SC000YA700,Contractual Completion Date (15-Feb-09),,-471.983333333333,0,0,0,0,0,0,0,0,0,2009-02-15 08:00,,,2009-02-15 08:01,2009-02-15 08:01,,2009-04-14 17:00,2009-04-14 17:00,2009-04-14 17:00,2009-04-14 17:00,2009-04-14 17:00,2009-04-14 17:00,,2009-02-15 08:01,2009-02-15 08:01,CS_MEOA,PT_Normal,,,,,Im74HyYYSiqmEwc0yTGTjA,,2009-02-15 08:01,CS_MEOB,Y,0,0,,,2007-02-01 02:43,2007-02-04 01:05,hbe4678,hbe4678,2009-04-14 17:00,2009-04-14 17:00,0
4629,12460810,14517,6816228,13332,0,0,N,N,N,CP_Units,TT_FinMile,DT_FixedDrtn,RV_OK,TK_NotStart,SC000T0120,(PC-44) Provisional Completion,,-471.983333333333,0,0,0,0,0,0,0,0,0,,,,2008-08-25 08:01,2008-08-25 08:01,,2008-10-22 17:00,2008-10-22 17:00,2008-10-22 17:00,2008-10-22 17:00,2008-10-22 17:00,2008-10-22 17:00,,2008-08-25 08:01,2008-08-25 08:01,,PT_Normal,,,,,7HrtRtmPTjS/L0ZQ6L5IWw,KGp967tc2USnhNUzs91Y1R,,,Y,0,0,,,2007-02-01 02:43,2007-02-04 01:05,hbe4678,hbe4678,2008-10-22 17:00,2008-10-22 17:00,0
4630,12460811,14517,6816228,13332,0,0,N,N,N,CP_Units,TT_FinMile,DT_FixedDrtn,RV_OK,TK_NotStart,EK000YA887,(PC-43) Complete Reliability Test,,-471.983333333333,0,0,0,0,0,0,0,0,0,,,,2008-08-25 08:01,2008-08-25 08:01,,2008-10-22 17:00,2008-10-22 17:00,2008-10-22 17:00,2008-10-22 17:00,2008-10-22 17:00,2008-10-22 17:00,,2008-08-25 08:01,2008-08-25 08:01,,PT_Normal,,,,,urVu0rniTy2Tx72BISuy0Q,iYxk+Wg9T52PLJDHJQTjww,,,Y,0,0,,,2007-02-01 02:43,2007-02-04 01:05,hbe4678,hbe4678,2008-10-22 17:00,2008-10-22 17:00,0
4631,12460812,14517,6816228,13332,0,100,N,N,N,CP_Units,TT_FinMile,DT_FixedDrtn,RV_OK,TK_Complete,EK000YA829,(EP-31) Vendor Acceptance of Commitment for Substation,,,,0,0,0,0,0,0,0,0,,2006-07-13 00:00,2006-07-13 00:00,2009-02-15 08:01,2009-02-15 08:01,,2007-01-27 00:00,2007-01-27 00:00,,,2006-09-29 17:00,2006-09-29 17:00,,,,,PT_Normal,,,,,1L7zUug2SH+LZSz2JcDRXw,,,,N,0,0,,,2007-02-01 02:43,2007-02-04 01:05,hbe4678,hbe4678,,,0
4632,12460813,14517,6816228,13332,0,0,N,N,N,CP_Units,TT_FinMile,DT_FixedDrtn,RV_OK,TK_NotStart,EK000YA853,(EP-44) Issue Operation & Maintenance Manuals,,4208.01666666667,4680,0,0,0,0,0,0,0,0,,,,2009-02-15 08:01,2009-02-15 08:01,,2007-09-07 17:00,2007-09-07 17:00,2007-09-07 17:00,2007-09-07 17:00,2007-09-07 17:00,2007-09-07 17:00,,2009-02-15 08:01,2009-02-15 08:01,,PT_Normal,,,,,6CRVC6qwRgGgHChhbX/Jnw,,,,N,0,0,,,2007-02-01 02:43,2007-02-04 01:00,hbe4678,hbe4678,2007-09-07 17:00,2007-09-07 17:00,0
4633,12460814,14517,6816228,13332,0,0,N,N,N,CP_Units,TT_FinMile,DT_FixedDrtn,RV_OK,TK_NotStart,EK000YA860,(PC-29) Complete Erection of Ammonia Storage Tanks 2101-F/2102-F,,2496.01666666667,2968,0,0,0,0,0,0,0,0,,,,2009-02-15 08:01,2009-02-15 08:01,,2008-04-08 17:00,2008-04-08 17:00,2008-04-08 17:00,2008-04-08 17:00,2008-04-08 17:00,2008-04-08 17:00,,2009-02-15 08:01,2009-02-15 08:01,,PT_Normal,,,,,/Y1FYWAlRZqX6aY1av2gaw,,,,N,0,0,,,2007-02-01 02:43,2007-02-04 01:00,hbe4678,hbe4678,2008-04-08 17:00,2008-04-08 17:00,0
4634,12460815,14517,6816228,13332,0,0,N,N,N,CP_Units,TT_FinMile,DT_FixedDrtn,RV_OK,TK_NotStart,EK000YA877,"(PC-33) Complete >90% - ISBL - Unit 02 pipe testing -visual,service,hydrostatic,or pneumatic testing",,2688.01666666667,3160,0,0,0,0,0,0,0,0,,,,2009-02-15 08:01,2009-02-15 08:01,,2008-03-15 17:00,2008-03-15 17:00,2008-03-15 17:00,2008-03-15 17:00,2008-03-15 17:00,2008-03-15 17:00,,2009-02-15 08:01,2009-02-15 08:01,,PT_Normal,,,,,/AEJiu8/Qlisxvbq3D4jOA,,,,N,0,0,,,2007-02-01 02:43,2007-02-04 01:00,hbe4678,hbe4678,2008-03-15 17:00,2008-03-15 17:00,0
4635,12460816,14517,6816228,13332,0,0,N,N,N,CP_Units,TT_FinMile,DT_FixedDrtn,RV_OK,TK_NotStart,EK000YA883,(PC-39) First Ammonia produced,,440.016666666667,0,0,0,0,0,0,0,0,0,,,,2008-08-25 08:01,2008-08-25 08:01,,2008-06-30 17:00,2008-06-30 17:00,2008-06-30 17:00,2008-06-30 17:00,2008-06-30 17:00,2008-06-30 17:00,,2008-08-25 08:01,2008-08-25 08:01,,PT_Normal,,,,,gwwj1lQlR/m0Ppo0huNa3g,,,,N,0,0,,,2007-02-01 02:43,2007-02-04 01:00,hbe4678,hbe4678,2008-06-30 17:00,2008-06-30 17:00,0
4636,12460817,14517,6816228,13332,0,0,N,N,N,CP_Units,TT_FinMile,DT_FixedDrtn,RV_OK,TK_NotStart,EK000YA886,(PC-41) Begin Reliability Test,,440.016666666667,912,0,0,0,0,0,0,0,0,,,,2008-08-25 08:01,2008-08-25 08:01,,2008-06-30 17:00,2008-06-30 17:00,2008-06-30 17:00,2008-06-30 17:00,2008-06-30 17:00,2008-06-30 17:00,,2008-08-25 08:01,2008-08-25 08:01,,PT_Normal,,,,,Xfttq7lHRpuQXbBkyhTB4w,,,,N,0,0,,,2007-02-01 02:43,2007-02-04 01:00,hbe4678,hbe4678,2008-06-30 17:00,2008-06-30 17:00,0
4637,12460818,14517,6816228,13332,0,0,N,N,N,CP_Units,TT_FinMile,DT_FixedDrtn,RV_OK,TK_NotStart,EK000YA861,(PC-17) Complete >90% - Erection of Steam Drum 101-F Structure,,4648.01666666667,5120,0,0,0,0,0,0,0,0,,,,2009-02-15 08:01,2009-02-15 08:01,,2007-07-14 17:00,2007-07-14 17:00,2007-07-14 17:00,2007-07-14 17:00,2007-07-14 17:00,2007-07-14 17:00,,2009-02-15 08:01,2009-02-15 08:01,,PT_Normal,,,,,/8MD7RihRPOOpeDM7sXohA,,,,N,0,0,,,2007-02-01 02:43,2007-02-04 01:00,hbe4678,hbe4678,2007-07-14 17:00,2007-07-14 17:00,0
4638,12460819,14517,6816228,13332,0,0,N,N,N,CP_Units,TT_FinMile,DT_FixedDrtn,RV_OK,TK_NotStart,EK000YA862,(PC-14) Complete >90% -Bldg No. 2601-K Main Control Building Erection,,4568.01666666667,5040,0,0,0,0,0,0,0,0,,,,2009-02-15 08:01,2009-02-15 08:01,,2007-07-24 17:00,2007-07-24 17:00,2007-07-24 17:00,2007-07-24 17:00,2007-07-24 17:00,2007-07-24 17:00,,2009-02-15 08:01,2009-02-15 08:01,,PT_Normal,,,,,SZpo1cYmRZCMhqM+kxHLvQ,,,,N,0,0,,,2007-02-01 02:43,2007-02-04 01:00,hbe4678,hbe4678,2007-07-24 17:00,2007-07-24 17:00,0
4639,12460820,14517,6816228,13332,0,0,N,N,N,CP_Units,TT_FinMile,DT_FixedDrtn,RV_OK,TK_NotStart,EK000YA863,(PC-09) Complete >90% Compressor 101-J/JT Equipment Foundation,,5712.01666666667,6184,0,0,0,0,0,0,0,0,,,,2009-02-15 08:01,2009-02-15 08:01,,2007-03-03 17:00,2007-03-03 17:00,2007-03-03 17:00,2007-03-03 17:00,2007-03-03 17:00,2007-03-03 17:00,,2009-02-15 08:01,2009-02-15 08:01,,PT_Normal,,,,,MGzIgB3wQ5e4yNXmwzzsbQ,,,,N,0,0,,,2007-02-01 02:43,2007-02-04 01:00,hbe4678,hbe4678,2007-03-03 17:00,2007-03-03 17:00,0
4640,12460821,14517,6816228,13332,0,0,N,N,N,CP_Units,TT_FinMile,DT_FixedDrtn,RV_OK,TK_NotStart,EK000YA864,(PC-22) Complete >90% - ISBL - Unit 02 equipment installation,,4280.01666666667,4752,0,0,0,0,0,0,0,0,,,,2009-02-15 08:01,2009-02-15 08:01,,2007-08-29 17:00,2007-08-29 17:00,2007-08-29 17:00,2007-08-29 17:00,2007-08-29 17:00,2007-08-29 17:00,,2009-02-15 08:01,2009-02-15 08:01,,PT_Normal,,,,,X5Atv246SsimC2jibnGMrA,,,,N,0,0,,,2007-02-01 02:43,2007-02-04 01:00,hbe4678,hbe4678,2007-08-29 17:00,2007-08-29 17:00,0
4641,12460822,14517,6816228,13332,0,0,N,N,N,CP_Units,TT_FinMile,DT_FixedDrtn,RV_OK,TK_NotStart,EK000YA865,"(PC-16) Erect 101-B Primary Reformer Heater Stack ,Forced & Induced Draft Fans",,5008.01666666667,5480,0,0,0,0,0,0,0,0,,,,2009-02-15 08:01,2009-02-15 08:01,,2007-05-30 17:00,2007-05-30 17:00,2007-05-30 17:00,2007-05-30 17:00,2007-05-30 17:00,2007-05-30 17:00,,2009-02-15 08:01,2009-02-15 08:01,,PT_Normal,,,,,FKcAsQm+Qym8KQjzMMjMIA,,,,N,0,0,,,2007-02-01 02:43,2007-02-04 01:00,hbe4678,hbe4678,2007-05-30 17:00,2007-05-30 17:00,0
4642,12460823,14517,6816228,13332,0,0,N,N,N,CP_Units,TT_FinMile,DT_FixedDrtn,RV_OK,TK_NotStart,EK000YA866,(PC-25) Complete >90% - OSBL - Unit 01 & 03 Electrical lighting installation,,3960.01666666667,4432,0,0,0,0,0,0,0,0,,,,2009-02-15 08:01,2009-02-15 08:01,,2007-10-08 17:00,2007-10-08 17:00,2007-10-08 17:00,2007-10-08 17:00,2007-10-08 17:00,2007-10-08 17:00,,2009-02-15 08:01,2009-02-15 08:01,,PT_Normal,,,,,F2W0IS8PSESDY5pfL6IO2Q,,,,N,0,0,,,2007-02-01 02:43,2007-02-04 01:00,hbe4678,hbe4678,2007-10-08 17:00,2007-10-08 17:00,0
4643,12460824,14517,6816228,13332,0,0,N,N,N,CP_Units,TT_FinMile,DT_FixedDrtn,RV_OK,TK_NotStart,EK000YA867,"(PC-19) Complete >90% - Cooling Tower ,Item No. 2101-U Erection",,4976.01666666667,5448,0,0,0,0,0,0,0,0,,,,2009-02-15 08:01,2009-02-15 08:01,,2007-06-03 17:00,2007-06-03 17:00,2007-06-03 17:00,2007-06-03 17:00,2007-06-03 17:00,2007-06-03 17:00,,2009-02-15 08:01,2009-02-15 08:01,,PT_Normal,,,,,/y5vN7x9QN+ztjaG4s7C3Q,,,,N,0,0,,,2007-02-01 02:43,2007-02-04 01:00,hbe4678,hbe4678,2007-06-03 17:00,2007-06-03 17:00,0
4644,12460825,14517,6816228,13332,0,0,N,N,N,CP_Units,TT_FinMile,DT_FixedDrtn,RV_OK,TK_NotStart,EK000YA868,(PC-26) Complete >90% 101-B Primary Reformer Erection,,4328.01666666667,4800,0,0,0,0,0,0,0,0,,,,2009-02-15 08:01,2009-02-15 08:01,,2007-08-23 17:00,2007-08-23 17:00,2007-08-23 17:00,2007-08-23 17:00,2007-08-23 17:00,2007-08-23 17:00,,2009-02-15 08:01,2009-02-15 08:01,,PT_Normal,,,,,Xhznv60/SOG6EbjEsAb0DA,,,,N,0,0,,,2007-02-01 02:43,2007-02-04 01:00,hbe4678,hbe4678,2007-08-23 17:00,2007-08-23 17:00,0
4645,12460826,14517,6816228,13332,0,0,N,N,N,CP_Units,TT_FinMile,DT_FixedDrtn,RV_OK,TK_NotStart,EK000YA869,(PC-30) Complete >90% - ISBL - Unit 02 - Equipment Insulation,,3288.01666666667,3760,0,0,0,0,0,0,0,0,,,,2009-02-15 08:01,2009-02-15 08:01,,2007-12-31 17:00,2007-12-31 17:00,2007-12-31 17:00,2007-12-31 17:00,2007-12-31 17:00,2007-12-31 17:00,,2009-02-15 08:01,2009-02-15 08:01,,PT_Normal,,,,,kF+MEd0RQqqf0jbDaNQCHg,,,,N,0,0,,,2007-02-01 02:43,2007-02-04 01:00,hbe4678,hbe4678,2007-12-31 17:00,2007-12-31 17:00,0
4646,12460827,14517,6816228,13332,0,0,N,N,N,CP_Units,TT_FinMile,DT_FixedDrtn,RV_OK,TK_NotStart,EK000YA870,(PC-34) Complete >90% - ISBL - Unit 02 Instruments Installed,,2688.01666666667,3160,0,0,0,0,0,0,0,0,,,,2009-02-15 08:01,2009-02-15 08:01,,2008-03-15 17:00,2008-03-15 17:00,2008-03-15 17:00,2008-03-15 17:00,2008-03-15 17:00,2008-03-15 17:00,,2009-02-15 08:01,2009-02-15 08:01,,PT_Normal,,,,,vTt+Zd8CToepjCWSkBZSXQ,,,,N,0,0,,,2007-02-01 02:43,2007-02-04 01:00,hbe4678,hbe4678,2008-03-15 17:00,2008-03-15 17:00,0
4647,12460828,14517,6816228,13332,0,0,N,N,N,CP_Units,TT_FinMile,DT_FixedDrtn,RV_OK,TK_NotStart,EK000YA871,"(PC-20) Install export Ammonia Line from EBIC site to Storage Tank,2101-F/2102-F Battery Limit",,4208,4679.98333333333,0,0,0,0,0,0,0,0,,,,2009-02-15 08:01,2009-02-15 08:01,,2007-09-08 08:01,2007-09-08 08:01,2007-09-08 08:01,2007-09-08 08:01,2007-09-08 08:01,2007-09-08 08:01,,2009-02-15 08:01,2009-02-15 08:01,,PT_Normal,,,,,zJEpD2fxR9aiQB58aqKPww,,,,N,0,0,,,2007-02-01 02:43,2007-02-04 01:00,hbe4678,hbe4678,2007-09-08 08:01,2007-09-08 08:01,0
