,task_id,proj_id,wbs_id,clndr_id,est_wt,phys_complete_pct,rev_fdbk_flag,lock_plan_flag,auto_compute_act_flag,complete_pct_type,task_type,duration_type,review_type,status_code,task_code,task_name,rsrc_id,total_float_hr_cnt,free_float_hr_cnt,remain_drtn_hr_cnt,act_work_qty,remain_work_qty,target_work_qty,target_drtn_hr_cnt,target_equip_qty,act_equip_qty,remain_equip_qty,cstr_date,act_start_date,act_end_date,late_start_date,late_end_date,expect_end_date,early_start_date,early_end_date,restart_date,reend_date,target_start_date,target_end_date,review_end_date,rem_late_start_date,rem_late_end_date,cstr_type,priority_type,suspend_date,resume_date,float_path,float_path_order,guid,tmpl_guid,cstr_date2,cstr_type2,driving_path_flag,act_this_per_work_qty,act_this_per_equip_qty,external_early_start_date,external_late_end_date,create_date,update_date,create_user,update_user,old_restart_date,old_reend_date,old_remain_drtn_hr_cnt
0,82181,772,10410,841,0,0,N,N,N,CP_Drtn,TT_Mile,DT_FixedDrtn,RV_OK,TK_NotStart,GM04,Ready for Load out ( 02nd Shipment/ Jacket & Piles ),,208,208,0,0,0,0,0,0,0,0,,,,2013-02-25 08:00,2013-02-25 08:00,,2013-01-23 08:00,2013-01-23 08:00,2013-01-23 08:00,2013-01-23 08:00,2013-01-23 08:00,2013-01-23 08:00,,2013-02-25 08:00,2013-02-25 08:00,,PT_Normal,,,,,oEdGu9OnQ0CgAkVlSv8iuw,,,,N,0,0,,,2012-06-18 09:56,2012-06-20 10:08,admin,admin,,,
1,82259,773,10461,850,1,0,N,N,N,CP_Drtn,TT_Task,DT_FixedDUR2,RV_OK,TK_NotStart,4229PPC140,Fabrication upto R.F.S for pump,,1792,0,1344,0,0,0,1344,0,0,0,,,,2013-02-26 08:00,2013-08-12 16:00,,2012-07-05 08:00,2012-12-31 16:00,2012-07-05 08:00,2012-12-31 16:00,2012-07-05 08:00,2012-12-31 16:00,,2013-02-26 08:00,2013-08-12 16:00,,PT_Normal,,,,,KAikZ+9QF0KBmVD/ZsQQ2g,a1p6ym4oS+6+JNBX4DLt6Q,,,N,0,0,,,2012-06-19 11:46,2012-06-20 09:59,admin,admin,,,
2,82260,773,10461,851,1,0,N,N,N,CP_Drtn,TT_Task,DT_FixedDUR2,RV_OK,TK_NotStart,4229PPC150,Delivery upto site for pump,,1800,1800,360,0,0,0,360,0,0,0,,,,2013-08-13 08:00,2013-09-26 16:00,,2012-12-31 16:00,2013-02-13 16:00,2012-12-31 16:00,2013-02-13 16:00,2012-12-31 16:00,2013-02-13 16:00,,2013-08-13 08:00,2013-09-26 16:00,,PT_Normal,,,,,OioCcL4LK0yoUdI631X/Yw,u9JIoe/yQfmyL1WOCEcyRg,,,N,0,0,,,2012-06-19 11:46,2012-06-20 09:59,admin,admin,,,
3,82261,773,10461,849,1,0,N,N,N,CP_Drtn,TT_Task,DT_FixedDUR2,RV_OK,TK_NotStart,4229PPC130,Receive revised commercial offers for pump,,1264,0,40,0,0,0,40,0,0,0,,,,2013-01-28 08:00,2013-02-03 16:00,,2012-06-06 08:00,2012-06-12 16:00,2012-06-06 08:00,2012-06-12 16:00,2012-06-06 08:00,2012-06-12 16:00,,2013-01-28 08:00,2013-02-03 16:00,,PT_Normal,,,,,kZRXb/SZJ0mg2D6BzUq8yQ,T9aUbtojSXilwnqU2Wi+6w,,,N,0,0,,,2012-06-19 11:46,2012-06-20 09:59,admin,admin,,,
4,82262,773,10461,849,1,0,N,N,N,CP_Drtn,TT_Task,DT_FixedDUR2,RV_OK,TK_NotStart,4229PPC160,Client approval on bid committee reccomendation,,1264,0,16,0,0,0,16,0,0,0,,,,2013-02-19 08:00,2013-02-20 16:00,,2012-06-28 08:00,2012-07-01 16:00,2012-06-28 08:00,2012-07-01 16:00,2012-06-28 08:00,2012-07-01 16:00,,2013-02-19 08:00,2013-02-20 16:00,,PT_Normal,,,,,wwXo3NEGMU6zZv6WMtvJYw,dsqur9zFTQ2kGKH9ey3RIw,,,N,0,0,,,2012-06-19 11:46,2012-06-20 09:59,admin,admin,,,
5,82263,773,10461,849,1,0,N,N,N,CP_Drtn,TT_Task,DT_FixedDUR2,RV_OK,TK_NotStart,4229PPC170,L.C issued by Gupco,,2368,2368,40,0,0,0,40,0,0,0,,,,2013-09-22 08:00,2013-09-26 16:00,,2012-07-19 08:00,2012-07-25 16:00,2012-07-19 08:00,2012-07-25 16:00,2012-07-19 08:00,2012-07-25 16:00,,2013-09-22 08:00,2013-09-26 16:00,,PT_Normal,,,,,uYKaQbAsUEa44wAReglG3Q,OMAcK7vgQqWlnsKzB4SywA,,,N,0,0,,,2012-06-19 11:46,2012-06-20 09:59,admin,admin,,,
6,82264,773,10461,849,1,100,N,N,N,CP_Drtn,TT_Task,DT_FixedDUR2,RV_OK,TK_Complete,4229PPC100,Issue RFQ for pump,,,,0,0,0,0,16,0,0,0,,2012-03-14 00:00,2012-03-20 00:00,2013-01-23 08:00,2013-01-23 08:00,,2012-06-02 00:00,2012-06-02 00:00,,,2012-04-29 08:00,2012-04-30 16:00,,,,,PT_Normal,,,,,8oD5bZpNBEWqIXM9k7V4Tg,+2aOWobYTG6hCGLLfOCD3Q,,,N,0,0,,,2012-06-19 11:46,2012-06-20 10:09,admin,admin,,,
7,82265,773,10461,850,1,100,N,N,N,CP_Drtn,TT_Task,DT_FixedDUR2,RV_OK,TK_Complete,4229PPC110,Bidding for pump,,,,0,0,0,0,320,0,0,0,,2012-03-21 00:00,2012-04-28 00:00,2013-01-23 08:00,2013-01-23 08:00,,2012-06-02 00:00,2012-06-02 00:00,,,2012-04-28 08:00,2012-06-06 16:00,,,,,PT_Normal,,,,,kISeitXVdEyc1CAWvhJtTg,tYAyHVveTym5PZWh1QwHuQ,,,N,0,0,,,2012-06-19 11:46,2012-06-20 10:09,admin,admin,,,
8,82266,773,10461,849,1,0,N,N,N,CP_Drtn,TT_Task,DT_FixedDUR2,RV_OK,TK_NotStart,4229PPC180,commercial evaluation & bid committee for pump,,1264,0,88,0,0,0,88,0,0,0,,,,2013-02-04 08:00,2013-02-18 16:00,2012-06-27 16:00,2012-06-13 08:00,2012-06-27 16:00,2012-06-13 08:00,2012-06-27 16:00,2012-06-13 08:00,2012-06-27 16:00,,2013-02-04 08:00,2013-02-18 16:00,,PT_Normal,,,,,y3VLCcIsaEO62BefhWlzaQ,7F1NBuHCRsuN+gRucuQXhg,,,N,0,0,,,2012-06-19 11:46,2012-06-20 09:59,admin,admin,,,
9,82267,773,10461,849,1,0,N,N,N,CP_Drtn,TT_Task,DT_FixedDUR2,RV_OK,TK_NotStart,4229PPC190,F.O.C for pump,,1264,0,24,0,0,0,24,0,0,0,,,,2013-02-21 08:00,2013-02-25 16:00,,2012-07-02 08:00,2012-07-04 16:00,2012-07-02 08:00,2012-07-04 16:00,2012-07-02 08:00,2012-07-04 16:00,,2013-02-21 08:00,2013-02-25 16:00,,PT_Normal,,,,,v4TOv+Oe2UugpB+YdCNUWg,s40e5+jDQyOWv96vSoQDuQ,,,N,0,0,,,2012-06-19 11:46,2012-06-20 09:59,admin,admin,,,
10,82268,773,10461,849,1,0,N,N,N,CP_Drtn,TT_Task,DT_FixedDUR2,RV_OK,TK_NotStart,4229PPC200,P.O for pump,,2368,0,40,0,0,0,40,0,0,0,,,,2013-09-15 08:00,2013-09-19 16:00,,2012-07-12 08:00,2012-07-18 16:00,2012-07-12 08:00,2012-07-18 16:00,2012-07-12 08:00,2012-07-18 16:00,,2013-09-15 08:00,2013-09-19 16:00,,PT_Normal,,,,,4E7dk+RjbUe8JE1rqKVxSQ,A5Q7aUOxRr+lBFCKOJdk6Q,,,N,0,0,,,2012-06-19 11:46,2012-06-20 09:59,admin,admin,,,
11,82269,773,10461,849,1,0,N,N,N,CP_Drtn,TT_LOE,DT_FixedDUR2,RV_OK,TK_Active,4229PPC120,T.E.R for  pump,,1264,0,24,0,0,0,240,0,0,0,,2012-04-29 00:00,,2012-04-29 08:00,2013-01-27 16:00,,2012-06-03 08:00,2012-06-05 16:00,2012-06-03 08:00,2012-06-05 16:00,2012-04-29 08:00,2012-06-07 16:00,,2012-04-29 08:00,2013-01-27 16:00,,PT_Normal,,,,,4+TMKgAU10OV9tf29TVLBw,qop3jGJXRzSmAG4KFxnkEQ,,,N,0,0,,,2012-06-19 11:46,2012-06-20 10:09,admin,admin,,,
12,82270,773,10461,849,1,0,N,N,N,CP_Drtn,TT_LOE,DT_FixedDUR2,RV_OK,TK_NotStart,4229PPC210,MRP for pump,,2368,0,40,0,0,0,40,0,0,0,,,,2013-09-08 08:00,2013-09-12 16:00,,2012-07-05 08:00,2012-07-11 16:00,2012-07-05 08:00,2012-07-11 16:00,2012-07-05 08:00,2012-07-11 16:00,,2013-09-08 08:00,2013-09-12 16:00,,PT_Normal,,,,,5m/Opon9LUCwslmLToskKA,uQOO7klWSbqBLLrj/LWZpQ,,,N,0,0,,,2012-06-19 11:46,2012-06-20 10:09,admin,admin,,,
13,82271,773,10462,850,1,0,N,N,N,CP_Drtn,TT_Task,DT_FixedDUR2,RV_OK,TK_NotStart,4229PFV200,Fabrication upto R.F.S,,1808,0,1344,0,0,0,1344,0,0,0,,,,2013-03-13 08:00,2013-08-27 16:00,,2012-07-18 08:00,2013-01-13 16:00,2012-07-18 08:00,2013-01-13 16:00,2012-07-18 08:00,2013-01-13 16:00,,2013-03-13 08:00,2013-08-27 16:00,,PT_Normal,,,,,fJhRumxpx02nXhDm6Nb/IQ,YpF1cbjLSNmmuSIlXsh/5g,,,N,0,0,,,2012-06-19 11:46,2012-06-20 09:59,admin,admin,,,
14,82272,773,10462,850,1,0,N,N,N,CP_Drtn,TT_Task,DT_FixedDUR2,RV_OK,TK_NotStart,4229PFV210,Delivery upto site,,1808,0,240,0,0,0,240,0,0,0,,,,2013-08-28 08:00,2013-09-26 16:00,,2013-01-14 08:00,2013-02-12 16:00,2013-01-14 08:00,2013-02-12 16:00,2013-01-14 08:00,2013-02-12 16:00,,2013-08-28 08:00,2013-09-26 16:00,,PT_Normal,,,,,B5rNQ2C1NE2hpaDB917ZLg,NgGQizK+RduStbx0VPvmwQ,,,N,0,0,,,2012-06-19 11:46,2012-06-20 09:59,admin,admin,,,
15,82273,773,10462,849,1,0,N,N,N,CP_Drtn,TT_Task,DT_FixedDUR2,RV_OK,TK_NotStart,4229PFV130,Receive revised commercial offers,,1280,0,40,0,0,0,40,0,0,0,,,,2013-02-14 08:00,2013-02-20 16:00,,2012-06-21 08:00,2012-06-27 16:00,2012-06-21 08:00,2012-06-27 16:00,2012-06-21 08:00,2012-06-27 16:00,,2013-02-14 08:00,2013-02-20 16:00,,PT_Normal,,,,,PYpGjBQFmUeHcW2cl2tatg,xZAyxBt6SKW9L4MiAA3DVA,,,N,0,0,,,2012-06-19 11:46,2012-06-20 09:59,admin,admin,,,
16,82274,773,10462,849,1,0,N,N,N,CP_Drtn,TT_Task,DT_FixedDUR2,RV_OK,TK_NotStart,4229PFV150,Client approval on bid committee reccommendation,,1280,0,16,0,0,0,16,0,0,0,,,,2013-03-07 08:00,2013-03-10 16:00,,2012-07-12 08:00,2012-07-15 16:00,2012-07-12 08:00,2012-07-15 16:00,2012-07-12 08:00,2012-07-15 16:00,,2013-03-07 08:00,2013-03-10 16:00,,PT_Normal,,,,,gFj55yAo5EC1a1uzsetz0g,Geyi07DTSxOfOHFyI/Uohw,,,N,0,0,,,2012-06-19 11:46,2012-06-20 09:59,admin,admin,,,
17,82275,773,10462,849,1,0,N,N,N,CP_Drtn,TT_Task,DT_FixedDUR2,RV_OK,TK_NotStart,4229PFV190,L.C issued by Gupco,,2320,2320,40,0,0,0,40,0,0,0,,,,2013-09-22 08:00,2013-09-26 16:00,,2012-07-29 08:00,2012-08-02 16:00,2012-07-29 08:00,2012-08-02 16:00,2012-07-29 08:00,2012-08-02 16:00,,2013-09-22 08:00,2013-09-26 16:00,,PT_Normal,,,,,VwZcYnUieUyRZQTby03tEg,y5LsRR69QQOuwAg4V5LzDQ,,,N,0,0,,,2012-06-19 11:46,2012-06-20 09:59,admin,admin,,,
18,82276,773,10462,849,1,100,N,N,N,CP_Drtn,TT_Task,DT_FixedDUR2,RV_OK,TK_Complete,4229PFV100,Issue RFQ for SDV,,,,0,0,0,0,16,0,0,0,,2012-05-06 00:00,2012-05-07 16:00,2013-01-26 16:00,2013-01-26 16:00,,2012-06-02 00:00,2012-06-02 00:00,,,2012-04-29 08:00,2012-04-30 16:00,,,,,PT_Normal,,,,,WEjNf5qgCUOjLRR0pdqT8w,DZgy5C57TmGeuXtV8stk7g,,,N,0,0,,,2012-06-19 11:46,2012-06-20 10:09,admin,admin,,,
19,82277,773,10462,850,1,0,N,N,N,CP_Drtn,TT_Task,DT_FixedDUR2,RV_OK,TK_Active,4229PFV110,Bidding for SDV,,1816,0,0,0,0,0,240,0,0,0,,2012-05-01 08:00,,2013-01-26 16:00,2013-01-26 16:00,2012-05-20 16:00,2012-06-02 08:00,2012-06-02 08:00,2012-06-02 08:00,2012-06-02 08:00,2012-05-01 08:00,2012-05-30 16:00,,2013-01-26 16:00,2013-01-26 16:00,,PT_Normal,,,,,szNg1CsMikW3RxCs26LekA,Y1VZYWCvS+ihGgfVbH0oMw,,,N,0,0,,,2012-06-19 11:46,2012-06-20 09:59,admin,admin,,,
20,82278,773,10462,849,1,0,N,N,N,CP_Drtn,TT_Task,DT_FixedDUR2,RV_OK,TK_NotStart,4229PFV140,Commercial evaluation & bid committee for SDV,,1280,0,80,0,0,0,80,0,0,0,,,,2013-02-21 08:00,2013-03-06 16:00,,2012-06-28 08:00,2012-07-11 16:00,2012-06-28 08:00,2012-07-11 16:00,2012-06-28 08:00,2012-07-11 16:00,,2013-02-21 08:00,2013-03-06 16:00,,PT_Normal,,,,,S44HIFEf30axROa06do1Hg,LYMQdgR7RxyEuAULuvCsww,,,N,0,0,,,2012-06-19 11:46,2012-06-20 09:59,admin,admin,,,
21,82279,773,10462,849,1,0,N,N,N,CP_Drtn,TT_Task,DT_FixedDUR2,RV_OK,TK_NotStart,4229PFV160,F.O.C for SDV,,1280,0,16,0,0,0,16,0,0,0,,,,2013-03-11 08:00,2013-03-12 16:00,,2012-07-16 08:00,2012-07-17 16:00,2012-07-16 08:00,2012-07-17 16:00,2012-07-16 08:00,2012-07-17 16:00,,2013-03-11 08:00,2013-03-12 16:00,,PT_Normal,,,,,2Rg6gIkHWEa7TT/bFrGPuw,JlpKpXEVTleuOfYGVnTtSQ,,,N,0,0,,,2012-06-19 11:46,2012-06-20 09:59,admin,admin,,,
22,82280,773,10462,849,1,0,N,N,N,CP_Drtn,TT_Task,DT_FixedDUR2,RV_OK,TK_NotStart,4229PFV180,P.O for SDV,,2320,0,16,0,0,0,16,0,0,0,,,,2013-09-18 08:00,2013-09-19 16:00,,2012-07-25 08:00,2012-07-26 16:00,2012-07-25 08:00,2012-07-26 16:00,2012-07-25 08:00,2012-07-26 16:00,,2013-09-18 08:00,2013-09-19 16:00,,PT_Normal,,,,,G6s4i2xe4kW8iAzbYjCdCA,Q6pu6xH4QJWG7K0B3PCRfg,,,N,0,0,,,2012-06-19 11:46,2012-06-20 09:59,admin,admin,,,
23,82281,773,10462,849,1,0,N,N,N,CP_Drtn,TT_LOE,DT_FixedDUR2,RV_OK,TK_Active,4229PFV120,T.E.R for SDV,,1280,0,112,0,0,0,80,0,0,0,,2012-05-27 00:00,,2012-05-27 08:00,2013-02-13 16:00,,2012-06-03 08:00,2012-06-20 16:00,2012-06-03 08:00,2012-06-20 16:00,2012-05-27 08:00,2012-06-07 16:00,,2012-05-27 08:00,2013-02-13 16:00,,PT_Normal,,,,,ZIxDxB7Pl0OcAuWvP51VJA,95OuTWdmTci9yjKVo77sOQ,,,N,0,0,,,2012-06-19 11:46,2012-06-20 10:09,admin,admin,,,
24,82282,773,10462,849,1,0,N,N,N,CP_Drtn,TT_LOE,DT_FixedDUR2,RV_OK,TK_NotStart,4229PFV170,MRP for SDV,,2320,0,40,0,0,0,40,0,0,0,,,,2013-09-11 08:00,2013-09-17 16:00,,2012-07-18 08:00,2012-07-24 16:00,2012-07-18 08:00,2012-07-24 16:00,2012-07-18 08:00,2012-07-24 16:00,,2013-09-11 08:00,2013-09-17 16:00,,PT_Normal,,,,,exn2qYfPT0GY96xekYATIg,yW+b6vdoTdiABNTPTmZG3Q,,,N,0,0,,,2012-06-19 11:46,2012-06-20 10:09,admin,admin,,,
25,82283,773,10463,850,1,0,N,N,N,CP_Drtn,TT_Task,DT_FixedDUR2,RV_OK,TK_Active,4229PAP110,Bidding for Piping bulk,,1888,0,72,0,0,0,200,0,0,0,,2012-05-17 00:00,,2013-02-05 08:00,2013-02-13 16:00,2012-06-10 16:00,2012-06-02 08:00,2012-06-10 16:00,2012-06-02 08:00,2012-06-10 16:00,2012-05-01 08:00,2012-05-25 16:00,,2013-02-05 08:00,2013-02-13 16:00,,PT_Normal,,,,,kk6XsHuef0Knl/PW1AJxGA,RSkHUusFTRuhwCxDwsC8AA,,,N,0,0,,,2012-06-19 11:46,2012-06-20 09:59,admin,admin,,,
26,82284,773,10463,849,1,0,N,N,N,CP_Drtn,TT_Task,DT_FixedDUR2,RV_OK,TK_NotStart,4229PAP140,commercial evaluation & bid committee for Piping bulk,,1344,0,96,0,0,0,96,0,0,0,,,,2013-03-21 08:00,2013-04-07 16:00,,2012-07-16 08:00,2012-07-31 16:00,2012-07-16 08:00,2012-07-31 16:00,2012-07-16 08:00,2012-07-31 16:00,,2013-03-21 08:00,2013-04-07 16:00,,PT_Normal,,,,,bSAwPKXVGE2idUmrUP4T+w,dwbiupqaT4OV78e3gkBdLA,,,N,0,0,,,2012-06-19 11:46,2012-06-20 09:59,admin,admin,,,
27,82285,773,10463,849,1,0,N,N,N,CP_Drtn,TT_Task,DT_FixedDUR2,RV_OK,TK_NotStart,4229PAP160,F.O.C for Piping bulk,,1344,0,24,0,0,0,24,0,0,0,,,,2013-04-10 08:00,2013-04-14 16:00,,2012-08-05 08:00,2012-08-07 16:00,2012-08-05 08:00,2012-08-07 16:00,2012-08-05 08:00,2012-08-07 16:00,,2013-04-10 08:00,2013-04-14 16:00,,PT_Normal,,,,,VbuNBnXqlUuG8H87m0CVgQ,ZznbW4I5TQyz/MkfaaZZPQ,,,N,0,0,,,2012-06-19 11:46,2012-06-20 09:59,admin,admin,,,
28,82286,773,10463,849,1,0,N,N,N,CP_Drtn,TT_Task,DT_FixedDUR2,RV_OK,TK_NotStart,4229PAP180,P.O for Piping bulk,,2200,0,16,0,0,0,16,0,0,0,,,,2013-09-18 08:00,2013-09-19 16:00,,2012-08-15 08:00,2012-08-16 16:00,2012-08-15 08:00,2012-08-16 16:00,2012-08-15 08:00,2012-08-16 16:00,,2013-09-18 08:00,2013-09-19 16:00,,PT_Normal,,,,,PDcNXGtrE0eGJWxYjB4sIQ,SKWwrxukTLi+Xg4zfSINFg,,,N,0,0,,,2012-06-19 11:46,2012-06-20 09:59,admin,admin,,,
29,82287,773,10463,849,1,0,N,N,N,CP_Drtn,TT_LOE,DT_FixedDUR2,RV_OK,TK_NotStart,4229PAP120,T.E.R for Piping bulk,,1344,0,160,0,0,0,160,0,0,0,,,,2013-02-14 08:00,2013-03-13 16:00,,2012-06-11 08:00,2012-07-08 16:00,2012-06-11 08:00,2012-07-08 16:00,2012-06-11 08:00,2012-07-08 16:00,,2013-02-14 08:00,2013-03-13 16:00,,PT_Normal,,,,,7/afgscCf0uQjDR+XPNpcg,sMA8/NSLRxS0HOz3t1hrYg,,,N,0,0,,,2012-06-19 11:46,2012-06-20 10:09,admin,admin,,,
30,82288,773,10463,849,1,0,N,N,N,CP_Drtn,TT_LOE,DT_FixedDUR2,RV_OK,TK_NotStart,4229PAP170,MRP for Piping bulk,,2200,0,40,0,0,0,40,0,0,0,,,,2013-09-11 08:00,2013-09-17 16:00,,2012-08-08 08:00,2012-08-14 16:00,2012-08-08 08:00,2012-08-14 16:00,2012-08-08 08:00,2012-08-14 16:00,,2013-09-11 08:00,2013-09-17 16:00,,PT_Normal,,,,,RFTX9pEg90yafLrcxQM3mw,JsEiLB/fSHyyIe88IaN4EA,,,N,0,0,,,2012-06-19 11:46,2012-06-20 10:09,admin,admin,,,
31,82289,773,10463,849,1,0,N,N,N,CP_Drtn,TT_Task,DT_FixedDUR2,RV_OK,TK_NotStart,4229PAP130,Receive revised commercial offers,,1344,0,40,0,0,0,40,0,0,0,,,,2013-03-14 08:00,2013-03-20 16:00,,2012-07-09 08:00,2012-07-15 16:00,2012-07-09 08:00,2012-07-15 16:00,2012-07-09 08:00,2012-07-15 16:00,,2013-03-14 08:00,2013-03-20 16:00,,PT_Normal,,,,,O2Fo3j0WBUCSMPOBKbqGmg,l5/2fB1JQ1i2IDfyCFhI2Q,,,N,0,0,,,2012-06-19 11:46,2012-06-20 09:59,admin,admin,,,
32,82290,773,10463,849,1,0,N,N,N,CP_Drtn,TT_Task,DT_FixedDUR2,RV_OK,TK_NotStart,4229PAP150,Client approval on bid committee reccomendation,,1344,0,16,0,0,0,16,0,0,0,,,,2013-04-08 08:00,2013-04-09 16:00,,2012-08-01 08:00,2012-08-02 16:00,2012-08-01 08:00,2012-08-02 16:00,2012-08-01 08:00,2012-08-02 16:00,,2013-04-08 08:00,2013-04-09 16:00,,PT_Normal,,,,,pSY1GQ4AM026tCCEtBAkww,kXkyA5JCSby3AKvv4I+fPw,,,N,0,0,,,2012-06-19 11:46,2012-06-20 09:59,admin,admin,,,
33,82291,773,10463,849,1,0,N,N,N,CP_Drtn,TT_Task,DT_FixedDUR2,RV_OK,TK_NotStart,4229PAP190,L.C issued by Gupco,,2200,2200,40,0,0,0,40,0,0,0,,,,2013-09-22 08:00,2013-09-26 16:00,,2012-08-26 08:00,2012-08-30 16:00,2012-08-26 08:00,2012-08-30 16:00,2012-08-26 08:00,2012-08-30 16:00,,2013-09-22 08:00,2013-09-26 16:00,,PT_Normal,,,,,AdvEEUuc7EOhXW9nyCSi0Q,EMf+ksWjTcGuMuIbswsUsQ,,,N,0,0,,,2012-06-19 11:46,2012-06-20 09:59,admin,admin,,,
34,82292,773,10463,851,1,0,N,N,N,CP_Drtn,TT_Task,DT_FixedDUR2,RV_OK,TK_NotStart,4229PAP210,Delivery upto site,,1920,1920,360,0,0,0,360,0,0,0,,,,2013-08-13 08:00,2013-09-26 16:00,,2012-12-18 08:00,2013-01-29 16:00,2012-12-18 08:00,2013-01-29 16:00,2012-12-18 08:00,2013-01-29 16:00,,2013-08-13 08:00,2013-09-26 16:00,,PT_Normal,,,,,lUUOqnkMP0ehakv+2XRWIQ,aOArhSsxTIK7Sik+Ukt+iQ,,,N,0,0,,,2012-06-19 11:46,2012-06-20 09:59,admin,admin,,,
35,82293,773,10463,850,1,0,N,N,N,CP_Drtn,TT_Task,DT_FixedDUR2,RV_OK,TK_NotStart,4229PAP200,Fabrication upto R.F.S,,1904,0,960,0,0,0,960,0,0,0,,,,2013-04-15 08:00,2013-08-12 16:00,,2012-08-08 08:00,2012-12-17 16:00,2012-08-08 08:00,2012-12-17 16:00,2012-08-08 08:00,2012-12-17 16:00,,2013-04-15 08:00,2013-08-12 16:00,,PT_Normal,,,,,BEJ2p/hq3USnNcQawI0D9w,cHSTCih9Tk23IDxIZKUWJQ,,,N,0,0,,,2012-06-19 11:46,2012-06-20 09:59,admin,admin,,,
36,82294,773,10463,849,1,100,N,N,N,CP_Drtn,TT_Task,DT_FixedDUR2,RV_OK,TK_Complete,4229PAP100,Issue RFQ for Piping bulk,,,,0,0,0,0,16,0,0,0,,2012-05-15 00:00,2012-05-16 16:00,2013-02-05 08:00,2013-02-05 08:00,,2012-06-02 00:00,2012-06-02 00:00,,,2012-04-29 08:00,2012-04-30 16:00,,,,,PT_Normal,,,,,g17HB9i8F0eAWHinVQj8Qg,6KlRPzYwSm21oBDABhlikw,,,N,0,0,,,2012-06-19 11:46,2012-06-20 10:09,admin,admin,,,
37,82295,773,10450,849,1,0,N,N,N,CP_Drtn,TT_Task,DT_FixedDUR2,RV_OK,TK_NotStart,4229PBV150,L.C issued by Gupco,,1960,0,40,0,0,0,40,0,0,0,,,,2013-05-26 08:00,2013-05-30 16:00,,2012-06-03 08:00,2012-06-07 16:00,2012-06-03 08:00,2012-06-07 16:00,2012-06-03 08:00,2012-06-07 16:00,,2013-05-26 08:00,2013-05-30 16:00,,PT_Normal,,,,,Cm2583dCNEedGhSZdr/LoA,wwxo8iztR4uwjBbqOwAQ2A,,,N,0,0,,,2012-06-19 11:46,2012-06-20 09:59,admin,admin,,,
38,82296,773,10450,850,1,100,N,N,N,CP_Drtn,TT_Task,DT_FixedDUR2,RV_OK,TK_Complete,4229PBV20,Bidding for Piping Ball Valves,,,,0,0,0,0,112,0,0,0,,2011-12-09 00:00,2012-01-11 00:00,2013-05-26 08:00,2013-05-26 08:00,,2012-06-02 00:00,2012-06-02 00:00,,,2012-01-08 08:00,2012-01-21 16:00,,,,,PT_Normal,,,,,Jif/4n2VRke61g2xKdEtKg,Yu8xLuDmTK2083Jgm9UK9w,,,N,0,0,,,2012-06-19 11:46,2012-06-20 10:09,admin,admin,,,
39,82297,773,10450,849,1,100,N,N,N,CP_Drtn,TT_Task,DT_FixedDUR2,RV_OK,TK_Complete,4229PBV50,commercial evaluation & bid committee,,,,0,0,0,0,80,0,0,0,,2012-03-14 00:00,2012-03-26 00:00,2013-05-26 08:00,2013-05-26 08:00,,2012-06-02 00:00,2012-06-02 00:00,,,2012-04-02 08:00,2012-04-15 16:00,,,,,PT_Normal,,,,,p9yPSqu0J0y/9AZ6gmdrWA,8lajj5dDQ12k8uidEmvUJA,,,N,0,0,,,2012-06-19 11:46,2012-06-20 10:09,admin,admin,,,
40,82298,773,10450,849,1,100,N,N,N,CP_Drtn,TT_Task,DT_FixedDUR2,RV_OK,TK_Complete,4229PBV70,F.O.C for Piping Ball Valves,,,,0,0,0,0,24,0,0,0,,2012-04-04 00:00,2012-04-05 00:00,2013-05-26 08:00,2013-05-26 08:00,,2012-06-02 00:00,2012-06-02 00:00,,,2012-04-09 08:00,2012-04-11 16:00,,,,,PT_Normal,,,,,SGKZe2z4IE+6i8bKmxQyTg,fPBWqCCmSjiusQBVBet/Yg,,,N,0,0,,,2012-06-19 11:46,2012-06-20 10:09,admin,admin,,,
41,82299,773,10450,849,1,100,N,N,N,CP_Drtn,TT_Task,DT_FixedDUR2,RV_OK,TK_Complete,4229PBV90,P.O for Piping Ball Valves,,,,0,0,0,0,16,0,0,0,,2012-04-15 00:00,2012-04-17 00:00,2013-05-26 08:00,2013-05-26 08:00,,2012-06-02 00:00,2012-06-02 00:00,,,2012-04-12 08:00,2012-04-15 16:00,,,,,PT_Normal,,,,,au43VZrn/USPPckAK4WSYQ,duYuABFbS6q7ugETwQdWAA,,,N,0,0,,,2012-06-19 11:46,2012-06-20 10:09,admin,admin,,,
42,82300,773,10450,850,1,0,N,N,N,CP_Drtn,TT_Task,DT_FixedDUR2,RV_OK,TK_Active,4229PBV110,Fabrication upto R.F.S (1st Batch),,2768,0,584,0,0,0,1008,0,0,0,,2012-04-17 00:00,,2013-06-01 08:00,2013-08-12 16:00,2012-08-19 16:00,2012-06-08 08:00,2012-08-19 16:00,2012-06-08 08:00,2012-08-19 16:00,2012-04-23 08:00,2012-09-07 16:00,,2013-06-01 08:00,2013-08-12 16:00,,PT_Normal,,,,,9/7w9OFDJUGmAPWrgjD83g,MUE0xc3sREy7yrbUxfj6Kg,,,N,0,0,,,2012-06-19 11:46,2012-06-20 09:59,admin,admin,,,
43,82301,773,10450,851,1,0,N,N,N,CP_Drtn,TT_Task,DT_FixedDUR2,RV_OK,TK_NotStart,4229PBV130,Delivery upto site (1st Batch),,2880,2880,360,0,0,0,360,0,0,0,,,,2013-08-13 08:00,2013-09-26 16:00,,2012-08-20 08:00,2012-10-03 16:00,2012-08-20 08:00,2012-10-03 16:00,2012-08-20 08:00,2012-10-03 16:00,,2013-08-13 08:00,2013-09-26 16:00,,PT_Normal,,,,,vDJE4YL7yEWa15ggdnyKBw,WLKa0aw9R+qpA5hDH3w6uw,,,N,0,0,,,2012-06-19 11:46,2012-06-20 09:59,admin,admin,,,
44,82302,773,10450,850,1,0,N,N,N,CP_Drtn,TT_Task,DT_FixedDUR2,RV_OK,TK_NotStart,4229PBV120,Fabrication upto R.F.S (2nd Batch) for minimal  balance,,1592,0,960,0,0,0,960,0,0,0,,,,2013-04-15 08:00,2013-08-12 16:00,,2012-09-28 08:00,2013-01-25 16:00,2012-09-28 08:00,2013-01-25 16:00,2012-09-28 08:00,2013-01-25 16:00,,2013-04-15 08:00,2013-08-12 16:00,,PT_Normal,,,,,Dk60e9xAgk+9UkmFP+Jbww,m7SNJWfsQZKDCN3in5Q+QA,,,N,0,0,,,2012-06-19 11:46,2012-06-20 09:59,admin,admin,,,
45,82303,773,10450,851,1,0,N,N,N,CP_Drtn,TT_Task,DT_FixedDUR2,RV_OK,TK_NotStart,4229PBV140,Delivery upto site (2nd Batch) for minimal  balance,,1592,1592,360,0,0,0,360,0,0,0,,,,2013-08-13 08:00,2013-09-26 16:00,,2013-01-26 08:00,2013-03-11 16:00,2013-01-26 08:00,2013-03-11 16:00,2013-01-26 08:00,2013-03-11 16:00,,2013-08-13 08:00,2013-09-26 16:00,,PT_Normal,,,,,4AbxTs3zJEGyfj1b5o2eLQ,Vaw+U/N1T9aumpmU0wKkYw,,,N,0,0,,,2012-06-19 11:46,2012-06-20 09:59,admin,admin,,,
46,82304,773,10450,849,1,100,N,N,N,CP_Drtn,TT_Task,DT_FixedDUR2,RV_OK,TK_Complete,4229PBV40,Receive revised commercial offers,,,,0,0,0,0,40,0,0,0,,2012-02-14 00:00,2012-03-13 00:00,2013-05-26 08:00,2013-05-26 08:00,,2012-06-02 00:00,2012-06-02 00:00,,,2012-03-04 08:00,2012-03-08 16:00,,,,,PT_Normal,,,,,H8e4FwEDKE2W7EXLdD8cvQ,gPd+4xZNQWyiUU6UpYt4NA,,,N,0,0,,,2012-06-19 11:46,2012-06-20 10:09,admin,admin,,,
47,82305,773,10450,849,1,100,N,N,N,CP_Drtn,TT_Task,DT_FixedDUR2,RV_OK,TK_Complete,4229PBV60,Client approval on bid committee reccomendation,,,,0,0,0,0,16,0,0,0,,2012-03-27 00:00,2012-04-03 16:00,2013-05-26 08:00,2013-05-26 08:00,,2012-06-02 00:00,2012-06-02 00:00,,,2012-04-01 08:00,2012-04-02 16:00,,,,,PT_Normal,,,,,i9RratrpWU+rjfm3QQ9Gzg,eO33vFhRRgGwJlaL3fIMBQ,,,N,0,0,,,2012-06-19 11:46,2012-06-20 10:09,admin,admin,,,
48,82306,773,10450,849,1,100,N,N,N,CP_Drtn,TT_Task,DT_FixedDUR2,RV_OK,TK_Complete,4229PBV10,Issue RFQ for Piping Ball Valves,,,,0,0,0,0,16,0,0,0,,2011-12-08 00:00,2011-12-08 00:00,2013-05-26 08:00,2013-05-26 08:00,,2012-06-02 00:00,2012-06-02 00:00,,,2012-01-01 08:00,2012-01-02 16:00,,,,,PT_Normal,,,,,46mQLwo3HkS7XbcXcxMdJQ,yL99yNJ4SBuFcg03a/QZPw,,,N,0,0,,,2012-06-19 11:46,2012-06-20 10:09,admin,admin,,,
49,82307,773,10450,849,1,100,N,N,N,CP_Drtn,TT_LOE,DT_FixedDrtn,RV_OK,TK_Complete,4229PBV30,T.E.R for Piping Ball Valves,,,,0,0,0,0,96,0,0,0,,2012-01-12 00:00,2012-02-13 00:00,,,,,,,,2012-01-15 08:00,2012-01-31 16:00,,,,,PT_Normal,,,,,aHVqTt71eUqqRe/Q5GqdnA,HUjbjFE3S0+4svMQFDJBpw,,,N,0,0,,,2012-06-19 11:46,2012-06-19 11:46,admin,admin,,,
50,82308,773,10450,849,1,100,N,N,N,CP_Drtn,TT_LOE,DT_FixedDUR2,RV_OK,TK_Complete,4229PBV80,MRP for Piping Ball Valves,,,,0,0,0,0,32,0,0,0,,2012-04-08 08:00,2012-04-12 00:00,,,,,,,,2012-04-08 08:00,2012-04-11 16:00,,,,,PT_Normal,,,,,FbHKsEd98k+/4DWULgWHRA,DBlm3vcAQ5OplCZIzFE2Eg,,,N,0,0,,,2012-06-19 11:46,2012-06-19 11:46,admin,admin,,,
51,82309,773,10448,851,1,0,N,N,N,CP_Drtn,TT_Task,DT_FixedDUR2,RV_OK,TK_NotStart,4229PSG100,Delivery upto site,,2296,272,72,0,0,0,72,0,0,0,,,,2013-09-18 08:00,2013-09-26 16:00,,2012-12-07 08:00,2012-12-15 16:00,2012-12-07 08:00,2012-12-15 16:00,2012-12-07 08:00,2012-12-15 16:00,,2013-09-18 08:00,2013-09-26 16:00,,PT_Normal,,,,,6Cs3spx7VUitgq3P2ibcDw,Ed1rw6pVGkqfXjRfFT7JpQ,,,N,0,0,,,2012-06-19 11:46,2012-06-20 09:59,admin,admin,,,
52,82310,773,10448,849,1,100,N,N,N,CP_Drtn,TT_Task,DT_FixedDUR2,RV_OK,TK_Complete,4229PSG30,Receive revised commercial offers,,,,0,0,0,0,40,0,0,0,,2012-01-16 00:00,2012-01-30 00:00,2013-01-14 08:00,2013-01-14 08:00,,2012-06-02 00:00,2012-06-02 00:00,,,2012-01-10 08:00,2012-01-16 16:00,,,,,PT_Normal,,,,,xzIA5P8FfU6lA8TJfnOdvg,rsbY6IPE9Ey3ZU3ZNeLLVg,,,N,0,0,,,2012-06-19 11:46,2012-06-20 10:09,admin,admin,,,
53,82311,773,10448,849,1,100,N,N,N,CP_Drtn,TT_Task,DT_FixedDUR2,RV_OK,TK_Complete,4229PSG50,Client approval on bid committee reccomendation,,,,0,0,0,0,16,0,0,0,,2012-02-29 00:00,2012-03-11 00:00,2013-01-14 08:00,2013-01-14 08:00,,2012-06-02 00:00,2012-06-02 00:00,,,2012-03-06 08:00,2012-03-07 16:00,,,,,PT_Normal,,,,,ZC0MgpMsHU2ppSGRIgZ2NA,iKP7vyvUVkGYjFWGXsYtWw,,,N,0,0,,,2012-06-19 11:46,2012-06-20 10:09,admin,admin,,,
54,82312,773,10448,850,1,0,N,N,N,CP_Drtn,TT_Task,DT_FixedDUR2,RV_OK,TK_Active,4229PSG90,Fabrication upto R.F.S,,1720,0,1360,0,0,0,1360,0,0,0,,2012-05-27 00:00,,2013-01-21 08:00,2013-07-09 16:00,2012-12-06 16:00,2012-06-08 08:00,2012-12-06 16:00,2012-06-08 08:00,2012-12-06 16:00,2012-05-11 08:00,2012-11-08 16:00,,2013-01-21 08:00,2013-07-09 16:00,,PT_Normal,,,,,ENnzjxyTe0CzSaq/c+wE/w,7UQ9XmTabEqxyA7/76n9MA,,,N,0,0,,,2012-06-19 11:46,2012-06-20 09:59,admin,admin,,,
55,82313,773,10448,849,1,0,N,N,N,CP_Drtn,TT_Task,DT_FixedDUR2,RV_OK,TK_NotStart,4229PSG80,L.C issued by Gupco,,1208,0,40,0,0,0,40,0,0,0,,,,2013-01-14 08:00,2013-01-20 16:00,,2012-06-03 08:00,2012-06-07 16:00,2012-06-03 08:00,2012-06-07 16:00,2012-06-03 08:00,2012-06-07 16:00,,2013-01-14 08:00,2013-01-20 16:00,,PT_Normal,,,,,mfj2mLdmckSDNflYn/Btgw,/xqtBKQ3QEuTmEP+B+vEag,,,N,0,0,,,2012-06-19 11:46,2012-06-20 09:59,admin,admin,,,
56,82314,773,10448,849,1,100,N,N,N,CP_Drtn,TT_Task,DT_FixedDUR2,RV_OK,TK_Complete,4229PSG10,Issue RFQ for SGS,,,,0,0,0,0,16,0,0,0,,2011-08-25 00:00,2011-08-28 00:00,2013-01-14 08:00,2013-01-14 08:00,,2012-06-02 00:00,2012-06-02 00:00,,,2011-08-15 08:00,2011-08-16 16:00,,,,,PT_Normal,,,,,lNs4Th7d+Umbijj8Kt8IVg,PapX/E/5VEedYgMn9pW1WA,,,N,0,0,,,2012-06-19 11:46,2012-06-20 10:09,admin,admin,,,
57,82315,773,10448,850,1,100,N,N,N,CP_Drtn,TT_Task,DT_FixedDUR2,RV_OK,TK_Complete,4229PSG20,Bidding for SGS,,,,0,0,0,0,264,0,0,0,,2011-08-29 00:00,2011-09-26 00:00,2013-01-14 08:00,2013-01-14 08:00,,2012-06-02 00:00,2012-06-02 00:00,,,2011-08-17 08:00,2011-09-18 16:00,,,,,PT_Normal,,,,,rTUA1xKWz0KBIxMicpQ3NQ,WAPraHdgpEiuGrgnPTRw+A,,,N,0,0,,,2012-06-19 11:46,2012-06-20 10:09,admin,admin,,,
58,82316,773,10448,849,1,100,N,N,N,CP_Drtn,TT_Task,DT_FixedDUR2,RV_OK,TK_Complete,4229PSG40,commercial evaluation & bid committee for SGS,,,,0,0,0,0,176,0,0,0,,2012-02-01 00:00,2012-02-29 00:00,2013-01-14 08:00,2013-01-14 08:00,,2012-06-02 00:00,2012-06-02 00:00,,,2012-03-06 08:00,2012-04-04 16:00,,,,,PT_Normal,,,,,vQHcBWVztkeLbf0jhJDaSw,e/V43NRVMUS133iTAw1J2Q,,,N,0,0,,,2012-06-19 11:46,2012-06-20 10:09,admin,admin,,,
59,82317,773,10448,849,1,100,N,N,N,CP_Drtn,TT_Task,DT_FixedDUR2,RV_OK,TK_Complete,4229PSG60,F.O.C for SGS,,,,0,0,0,0,24,0,0,0,,2012-03-12 00:00,2012-05-06 00:00,2013-01-14 08:00,2013-01-14 08:00,,2012-06-02 00:00,2012-06-02 00:00,,,2012-04-29 08:00,2012-05-01 16:00,,,,,PT_Normal,,,,,1rPx9Py3H0KLkwfbO+1Lyg,4AXOah8HAEeGpjijEBPUrg,,,N,0,0,,,2012-06-19 11:46,2012-06-20 10:09,admin,admin,,,
60,82318,773,10448,849,1,100,N,N,N,CP_Drtn,TT_Task,DT_FixedDUR2,RV_OK,TK_Complete,4229PSG70,P.O for SGS,,,,0,0,0,0,16,0,0,0,,2012-05-08 00:00,2012-05-27 00:00,2013-01-14 08:00,2013-01-14 08:00,,2012-06-02 00:00,2012-06-02 00:00,,,2012-05-02 08:00,2012-05-03 16:00,,,,,PT_Normal,,,,,mxILLze0GkGYxt6aFADV6A,AvajsHLxjEGyyQn6kYuXCQ,,,N,0,0,,,2012-06-19 11:46,2012-06-20 10:09,admin,admin,,,
61,82319,773,10448,849,1,100,N,N,N,CP_Drtn,TT_LOE,DT_FixedDUR2,RV_OK,TK_Complete,A1230,T.E.R for  SGS,,,,0,0,0,0,200,0,0,0,,2011-09-28 08:00,2012-01-16 00:00,,,,,,,,2011-09-28 08:00,2011-11-02 16:00,,,,,PT_Normal,,,,,UpWoB8oJdkuXpC4YbfmuPw,vXpc3RMask+39YuXt2zsqw,,,N,0,0,,,2012-06-19 11:46,2012-06-19 11:46,admin,admin,,,
62,82320,773,10448,849,1,100,N,N,N,CP_Drtn,TT_LOE,DT_FixedDUR2,RV_OK,TK_Complete,A1450,MRP for SGS,,,,0,0,0,0,40,0,0,0,,2012-03-08 08:00,2012-05-08 16:00,,,,,,,,2012-03-08 08:00,2012-03-14 16:00,,,,,PT_Normal,,,,,6rnJbde2kUqKxlF8M1fGLA,rUARi0MZeUWCfJu72L1JvQ,,,N,0,0,,,2012-06-19 11:46,2012-06-19 11:46,admin,admin,,,
63,82321,773,10449,850,1,0,N,N,N,CP_Drtn,TT_Task,DT_FixedDUR2,RV_OK,TK_Active,4229PVE90,Fabrication upto R.F.S,,1720,0,808,0,0,0,1456,0,0,0,,2012-04-01 00:00,,2013-01-21 08:00,2013-05-01 16:00,2012-09-28 16:00,2012-06-08 08:00,2012-09-28 16:00,2012-06-08 08:00,2012-09-28 16:00,2012-04-06 08:00,2012-10-16 16:00,,2013-01-21 08:00,2013-05-01 16:00,,PT_Normal,,,,,AZ/8A5aQV0GwF8Zcblsk4Q,7UQ9XmTabEqxyA7/76n9MA,,,N,0,0,,,2012-06-19 11:46,2012-06-20 09:59,admin,admin,,,
64,82322,773,10449,851,1,0,N,N,N,CP_Drtn,TT_Task,DT_FixedDUR2,RV_OK,TK_NotStart,4229PVE100,Delivery upto site,,2808,784,112,0,0,0,112,0,0,0,,,,2013-09-13 08:00,2013-09-26 16:00,,2012-09-29 08:00,2012-10-12 16:00,2012-09-29 08:00,2012-10-12 16:00,2012-09-29 08:00,2012-10-12 16:00,,2013-09-13 08:00,2013-09-26 16:00,,PT_Normal,,,,,X/NcsIh4ZUWPizcFeSTXqA,Ed1rw6pVGkqfXjRfFT7JpQ,,,N,0,0,,,2012-06-19 11:46,2012-06-20 09:59,admin,admin,,,
65,82323,773,10449,849,1,100,N,N,N,CP_Drtn,TT_Task,DT_FixedDUR2,RV_OK,TK_Complete,4229PVE30,Receive revised commercial offers,,,,0,0,0,0,40,0,0,0,,2012-02-21 00:00,2012-02-27 00:00,2013-01-14 08:00,2013-01-14 08:00,,2012-06-02 00:00,2012-06-02 00:00,,,2012-03-04 08:00,2012-03-08 16:00,,,,,PT_Normal,,,,,HdyGSlFLgkirwcW735cEnQ,rsbY6IPE9Ey3ZU3ZNeLLVg,,,N,0,0,,,2012-06-19 11:46,2012-06-20 10:09,admin,admin,,,
66,82324,773,10449,849,1,100,N,N,N,CP_Drtn,TT_Task,DT_FixedDUR2,RV_OK,TK_Complete,4229PVE50,Client approval on bid committee reccommendation,,,,0,0,0,0,16,0,0,0,,2012-03-19 00:00,2012-03-19 00:00,2013-01-14 08:00,2013-01-14 08:00,,2012-06-02 00:00,2012-06-02 00:00,,,2012-04-15 08:00,2012-04-16 16:00,,,,,PT_Normal,,,,,JiNa/gFrtEGMvsz//Ta/cA,iKP7vyvUVkGYjFWGXsYtWw,,,N,0,0,,,2012-06-19 11:46,2012-06-20 10:09,admin,admin,,,
67,82325,773,10449,849,1,0,N,N,N,CP_Drtn,TT_Task,DT_FixedDUR2,RV_OK,TK_NotStart,4229PVE80,L.C issued by Gupco,,1208,0,40,0,0,0,40,0,0,0,,,,2013-01-14 08:00,2013-01-20 16:00,,2012-06-03 08:00,2012-06-07 16:00,2012-06-03 08:00,2012-06-07 16:00,2012-06-03 08:00,2012-06-07 16:00,,2013-01-14 08:00,2013-01-20 16:00,,PT_Normal,,,,,LTFCsE0F80OdYKbNGfgNjQ,/xqtBKQ3QEuTmEP+B+vEag,,,N,0,0,,,2012-06-19 11:46,2012-06-20 09:59,admin,admin,,,
68,82326,773,10449,849,1,100,N,N,N,CP_Drtn,TT_Task,DT_FixedDUR2,RV_OK,TK_Complete,4229PVE10,Issue RFQ for pressure vessels,,,,0,0,0,0,16,0,0,0,,2011-11-17 00:00,2011-11-17 00:00,2013-01-14 08:00,2013-01-14 08:00,,2012-06-02 00:00,2012-06-02 00:00,,,2011-12-04 08:00,2011-12-05 16:00,,,,,PT_Normal,,,,,BHHRldfOKU2JxvvrgLQ3UQ,PapX/E/5VEedYgMn9pW1WA,,,N,0,0,,,2012-06-19 11:46,2012-06-20 10:09,admin,admin,,,
69,82327,773,10449,850,1,100,N,N,N,CP_Drtn,TT_Task,DT_FixedDUR2,RV_OK,TK_Complete,4229PVE20,Bidding for pressure vessels,,,,0,0,0,0,240,0,0,0,,2011-11-18 00:00,2011-12-08 00:00,2013-01-14 08:00,2013-01-14 08:00,,2012-06-02 00:00,2012-06-02 00:00,,,2011-12-06 08:00,2012-01-16 16:00,,,,,PT_Normal,,,,,u4H5GPuLXkWOR5pws4ub4w,WAPraHdgpEiuGrgnPTRw+A,,,N,0,0,,,2012-06-19 11:46,2012-06-20 10:09,admin,admin,,,
70,82328,773,10449,849,1,100,N,N,N,CP_Drtn,TT_Task,DT_FixedDUR2,RV_OK,TK_Complete,4229PVE40,commercial evaluation & bid committee for pressure vessels,,,,0,0,0,0,80,0,0,0,,2012-02-28 00:00,2012-03-18 00:00,2013-01-14 08:00,2013-01-14 08:00,,2012-06-02 00:00,2012-06-02 00:00,,,2012-03-05 08:00,2012-03-18 16:00,,,,,PT_Normal,,,,,OmKZ1I2mB0OGSLZn3kJlRg,e/V43NRVMUS133iTAw1J2Q,,,N,0,0,,,2012-06-19 11:46,2012-06-20 10:09,admin,admin,,,
71,82329,773,10449,849,1,100,N,N,N,CP_Drtn,TT_Task,DT_FixedDUR2,RV_OK,TK_Complete,4229PVE60,F.O.C for pressure vessels,,,,0,0,0,0,24,0,0,0,,2012-03-19 00:00,2012-03-20 00:00,2013-01-14 08:00,2013-01-14 08:00,,2012-06-02 00:00,2012-06-02 00:00,,,2012-04-17 08:00,2012-04-19 16:00,,,,,PT_Normal,,,,,LmMKVfWkuUi882AUfvXw8A,4AXOah8HAEeGpjijEBPUrg,,,N,0,0,,,2012-06-19 11:46,2012-06-20 10:09,admin,admin,,,
72,82330,773,10449,849,1,100,N,N,N,CP_Drtn,TT_Task,DT_FixedDUR2,RV_OK,TK_Complete,4229PVE70,P.O for pressure vessels,,,,0,0,0,0,40,0,0,0,,2012-03-26 00:00,2012-04-01 16:00,2013-01-14 08:00,2013-01-14 08:00,,2012-06-02 00:00,2012-06-02 00:00,,,2012-04-01 08:00,2012-04-05 16:00,,,,,PT_Normal,,,,,frOaAjCRd0uBTjDxxeKDCA,AvajsHLxjEGyyQn6kYuXCQ,,,N,0,0,,,2012-06-19 11:46,2012-06-20 10:09,admin,admin,,,
73,82331,773,10449,849,1,100,N,N,N,CP_Drtn,TT_LOE,DT_FixedDUR2,RV_OK,TK_Complete,A1140,T.E.R for pressure vessels,,,,0,0,0,0,160,0,0,0,,2011-12-15 00:00,2012-02-20 00:00,,,,,,,,2011-12-11 08:00,2012-01-05 16:00,,,,,PT_Normal,,,,,IyqEjYlff0iBTOLqOe3YNg,TS5Hs2NeCUKGVdf9bmhFig,,,N,0,0,,,2012-06-19 11:46,2012-06-19 11:46,admin,admin,,,
74,82332,773,10449,849,1,100,N,N,N,CP_Drtn,TT_LOE,DT_FixedDUR2,RV_OK,TK_Complete,A1410,MRP for  K.O drum,,,,0,0,0,0,16,0,0,0,,2012-03-21 08:00,2012-03-25 00:00,,,,,,,,2012-03-21 08:00,2012-03-22 16:00,,,,,PT_Normal,,,,,r7k2TjbBvUS5Z2r7bV8l8Q,DIoV5T8jvEStrhTR29QXhQ,,,N,0,0,,,2012-06-19 11:46,2012-06-19 11:46,admin,admin,,,
75,82333,773,10453,850,1,100,N,N,N,CP_Drtn,TT_Task,DT_FixedDUR2,RV_OK,TK_Complete,4229PTA90,Fabrication upto R.F.S,,,,0,0,0,0,960,0,0,0,,2012-03-03 00:00,2012-03-03 00:00,2012-12-31 08:00,2012-12-31 08:00,,2012-06-02 00:00,2012-06-02 00:00,,,2012-03-30 08:00,2012-07-27 16:00,,,,,PT_Normal,,,,,LLx4Lj63GUqv6UDMry7Q4w,7UQ9XmTabEqxyA7/76n9MA,,,N,0,0,,,2012-06-19 11:46,2012-06-20 10:09,admin,admin,,,
76,82334,773,10453,851,1,100,N,N,N,CP_Drtn,TT_Task,DT_FixedDUR2,RV_OK,TK_Complete,4229PTA100,Delivery upto site,,,,0,0,0,0,360,0,0,0,,2012-03-03 00:00,2012-03-03 00:00,2013-09-26 16:00,2013-09-26 16:00,,2012-06-02 00:00,2012-06-02 00:00,,,2012-07-28 08:00,2012-09-10 16:00,,,,,PT_Normal,,,,,ujiaatHsMkKpZLscel5Mfw,Ed1rw6pVGkqfXjRfFT7JpQ,,,N,0,0,,,2012-06-19 11:46,2012-06-20 10:09,admin,admin,,,
77,82335,773,10453,849,1,100,N,N,N,CP_Drtn,TT_Task,DT_FixedDUR2,RV_OK,TK_Complete,4229PTA30,Receive revised commercial offers,,,,0,0,0,0,40,0,0,0,,2011-12-29 00:00,2012-01-05 00:00,2012-12-31 08:00,2012-12-31 08:00,,2012-06-02 00:00,2012-06-02 00:00,,,2012-01-01 08:00,2012-01-05 16:00,,,,,PT_Normal,,,,,36rVLUXNbk+6sRiIhAAiZw,rsbY6IPE9Ey3ZU3ZNeLLVg,,,N,0,0,,,2012-06-19 11:46,2012-06-20 10:09,admin,admin,,,
78,82336,773,10453,849,1,100,N,N,N,CP_Drtn,TT_Task,DT_FixedDUR2,RV_OK,TK_Complete,4229PTA50,Client approval on bid committee reccomendation,,,,0,0,0,0,16,0,0,0,,2012-03-03 00:00,2012-03-03 00:00,2012-12-31 08:00,2012-12-31 08:00,,2012-06-02 00:00,2012-06-02 00:00,,,2012-03-11 08:00,2012-03-12 16:00,,,,,PT_Normal,,,,,wvnVSZ4Bu0y/+h0ydMVpsg,iKP7vyvUVkGYjFWGXsYtWw,,,N,0,0,,,2012-06-19 11:46,2012-06-20 10:09,admin,admin,,,
79,82337,773,10453,849,1,100,N,N,N,CP_Drtn,TT_Task,DT_FixedDUR2,RV_OK,TK_Complete,4229PTA80,L.C issued by Gupco,,,,0,0,0,0,40,0,0,0,,2012-03-03 00:00,2012-03-03 00:00,2012-12-31 08:00,2012-12-31 08:00,,2012-06-02 00:00,2012-06-02 00:00,,,2012-03-25 08:00,2012-03-29 16:00,,,,,PT_Normal,,,,,A5WvmOI6z0uZraMcKoebLg,/xqtBKQ3QEuTmEP+B+vEag,,,N,0,0,,,2012-06-19 11:46,2012-06-20 10:09,admin,admin,,,
80,82338,773,10453,849,1,100,N,N,N,CP_Drtn,TT_Task,DT_FixedDUR2,RV_OK,TK_Complete,4229PTA10,Issue RFQ for tanks,,,,0,0,0,0,16,0,0,0,,2011-10-27 00:00,2011-10-27 00:00,2013-09-26 16:00,2013-09-26 16:00,,2012-06-02 00:00,2012-06-02 00:00,,,2011-11-20 08:00,2011-11-21 16:00,,,,,PT_Normal,,,,,n61SM/AIrk2h4hQdW35/EQ,PapX/E/5VEedYgMn9pW1WA,,,N,0,0,,,2012-06-19 11:46,2012-06-20 10:09,admin,admin,,,
81,82339,773,10453,850,1,100,N,N,N,CP_Drtn,TT_Task,DT_FixedDUR2,RV_OK,TK_Complete,4229PTA20,Bidding for tanks,,,,0,0,0,0,240,0,0,0,,2011-10-27 00:00,2011-11-24 00:00,2012-12-31 08:00,2012-12-31 08:00,,2012-06-02 00:00,2012-06-02 00:00,,,2011-11-22 08:00,2011-12-21 16:00,,,,,PT_Normal,,,,,9i05/c0O9EmayzPZ2jhPzA,WAPraHdgpEiuGrgnPTRw+A,,,N,0,0,,,2012-06-19 11:46,2012-06-20 10:09,admin,admin,,,
82,82340,773,10453,849,1,100,N,N,N,CP_Drtn,TT_Task,DT_FixedDUR2,RV_OK,TK_Complete,4229PTA40,commercial evaluation & bid committee for tanks,,,,0,0,0,0,80,0,0,0,2012-01-08 00:00,2012-01-08 08:00,2012-03-03 00:00,2012-12-31 08:00,2012-12-31 08:00,,2012-06-02 00:00,2012-06-02 00:00,,,2012-01-08 08:00,2012-01-19 16:00,,,,CS_MSOA,PT_Normal,,,,,pABiG/jaykCm9kRWzDqNKA,e/V43NRVMUS133iTAw1J2Q,,,N,0,0,,,2012-06-19 11:46,2012-06-20 10:09,admin,admin,,,
83,82341,773,10453,849,1,100,N,N,N,CP_Drtn,TT_Task,DT_FixedDUR2,RV_OK,TK_Complete,4229PTA60,F.O.C for tanks,,,,0,0,0,0,24,0,0,0,,2012-03-03 00:00,2012-03-03 00:00,2012-12-31 08:00,2012-12-31 08:00,,2012-06-02 00:00,2012-06-02 00:00,,,2012-03-13 08:00,2012-03-15 16:00,,,,,PT_Normal,,,,,LL3B/5n1MUeWEiRTt1Cjtw,4AXOah8HAEeGpjijEBPUrg,,,N,0,0,,,2012-06-19 11:46,2012-06-20 10:09,admin,admin,,,
84,82342,773,10453,849,1,100,N,N,N,CP_Drtn,TT_Task,DT_FixedDUR2,RV_OK,TK_Complete,4229PTA70,P.O for tanks,,,,0,0,0,0,40,0,0,0,,2012-03-03 00:00,2012-03-03 00:00,2012-12-31 08:00,2012-12-31 08:00,,2012-06-02 00:00,2012-06-02 00:00,,,2012-03-18 08:00,2012-03-22 16:00,,,,,PT_Normal,,,,,+cr9WyGka0OFcNNTgFLaUQ,AvajsHLxjEGyyQn6kYuXCQ,,,N,0,0,,,2012-06-19 11:46,2012-06-20 10:09,admin,admin,,,
85,82343,773,10453,849,1,100,N,N,N,CP_Drtn,TT_LOE,DT_FixedDUR2,RV_OK,TK_Complete,A1130,T.E.R for  tanks,,,,0,0,0,0,160,0,0,0,,2011-11-24 00:00,2011-12-29 00:00,,,,,,,,2011-12-04 08:00,2011-12-29 16:00,,,,,PT_Normal,,,,,3mdZgFQfiUOVIxl9Ky9yLw,J+3VSORnYEKgQCu4Mr4NFw,,,N,0,0,,,2012-06-19 11:46,2012-06-19 11:46,admin,admin,,,
86,82344,773,10453,849,1,100,N,N,N,CP_Drtn,TT_LOE,DT_FixedDUR2,RV_OK,TK_Complete,A1400,MRP for tanks,,,,0,0,0,0,40,0,0,0,,2012-03-01 00:00,2012-03-03 00:00,,,,,,,,2012-03-18 08:00,2012-03-22 16:00,,,,,PT_Normal,,,,,sNeo9KrXPkyTPLjE80ah5Q,pGi7uaR4ukGkLPQ1Hd56lg,,,N,0,0,,,2012-06-19 11:46,2012-06-19 11:46,admin,admin,,,
87,82345,773,10454,849,1,100,N,N,N,CP_Drtn,TT_Task,DT_FixedDUR2,RV_OK,TK_Complete,4229PPL50,"Issue RFQ for 8"""" pipeline",,,,0,0,0,0,16,0,0,0,,2011-10-31 00:00,2011-10-31 00:00,2013-07-22 08:00,2013-07-22 08:00,,2012-06-02 00:00,2012-06-02 00:00,,,2011-12-04 08:00,2011-12-05 16:00,,,,,PT_Normal,,,,,3BTumsDZ3Ua5IFky8iDEnQ,,,,N,0,0,,,2012-06-19 11:46,2012-06-20 10:09,admin,admin,,,
88,82346,773,10454,850,1,0,N,N,N,CP_Drtn,TT_Task,DT_FixedDUR2,RV_OK,TK_Active,4229PPL110,Fabrication upto R.F.S,,3232,0,240,0,0,0,1008,0,0,0,,2012-02-29 00:00,,2013-07-29 08:00,2013-08-27 16:00,2012-07-07 16:00,2012-06-08 08:00,2012-07-07 16:00,2012-06-08 08:00,2012-07-07 16:00,2012-03-09 08:00,2012-07-12 16:00,,2013-07-29 08:00,2013-08-27 16:00,,PT_Normal,,,,,5cPsuswXMUuC3E220ieWGA,R/NAXGokTRCnEENVLJ/sUA,,,N,0,0,,,2012-06-19 11:46,2012-06-20 09:59,admin,admin,,,
89,82347,773,10454,851,1,0,N,N,N,CP_Drtn,TT_Task,DT_FixedDUR2,RV_OK,TK_NotStart,4229PPL120,Delivery upto site,,3344,1752,240,0,0,0,240,0,0,0,,,,2013-08-28 08:00,2013-09-26 16:00,,2012-07-08 08:00,2012-08-06 16:00,2012-07-08 08:00,2012-08-06 16:00,2012-07-08 08:00,2012-08-06 16:00,,2013-08-28 08:00,2013-09-26 16:00,,PT_Normal,,,,,xRImz4gJhEi8GIm+yCogvg,eZ0Jc2KERKSeoPTuttR7qA,,,N,0,0,,,2012-06-19 11:46,2012-06-20 09:59,admin,admin,,,
90,82348,773,10454,849,1,100,N,N,N,CP_Drtn,TT_Task,DT_FixedDUR2,RV_OK,TK_Complete,4229PPL70,Client approval on bid committee reccomendation,,,,0,0,0,0,16,0,0,0,,2012-02-13 00:00,2012-02-19 00:00,2013-07-22 08:00,2013-07-22 08:00,,2012-06-02 00:00,2012-06-02 00:00,,,2012-03-20 08:00,2012-03-21 16:00,,,,,PT_Normal,,,,,F7lrD5ND7U6hfq7BXKG9mw,p64Nr72NTx+uaiuhKYMg/w,,,N,0,0,,,2012-06-19 11:46,2012-06-20 10:09,admin,admin,,,
91,82349,773,10454,849,1,0,N,N,N,CP_Drtn,TT_Task,DT_FixedDUR2,RV_OK,TK_NotStart,4229PPL100,L.C issued by Gupco,,2288,0,40,0,0,0,40,0,0,0,,,,2013-07-22 08:00,2013-07-28 16:00,,2012-06-03 08:00,2012-06-07 16:00,2012-06-03 08:00,2012-06-07 16:00,2012-06-03 08:00,2012-06-07 16:00,,2013-07-22 08:00,2013-07-28 16:00,,PT_Normal,,,,,TMAkuvNpOUO1EJB3xjF6gg,bmO2BodKSyWpRC6TayH5ug,,,N,0,0,,,2012-06-19 11:46,2012-06-20 09:59,admin,admin,,,
92,82350,773,10454,849,1,100,N,N,N,CP_Drtn,TT_Task,DT_FixedDUR2,RV_OK,TK_Complete,4229PPL60,"commercial evaluation & bid committee for 8""""pipeline",,,,0,0,0,0,80,0,0,0,,2012-01-25 00:00,2012-01-30 00:00,2013-07-22 08:00,2013-07-22 08:00,,2012-06-02 00:00,2012-06-02 00:00,,,2012-03-06 08:00,2012-03-19 16:00,,,,,PT_Normal,,,,,NxglFPbrrkenaFTLZYwr0g,sFxdNzwOTBex/R7q5VbB/Q,,,N,0,0,,,2012-06-19 11:46,2012-06-20 10:09,admin,admin,,,
93,82351,773,10454,849,1,100,N,N,N,CP_Drtn,TT_Task,DT_FixedDUR2,RV_OK,TK_Complete,4229PPL80,"F.O.C for 8"""" pipeline",,,,0,0,0,0,24,0,0,0,,2012-02-21 00:00,2012-02-26 00:00,2013-07-22 08:00,2013-07-22 08:00,,2012-06-02 00:00,2012-06-02 00:00,,,2012-03-04 08:00,2012-03-06 16:00,,,,,PT_Normal,,,,,o1bsZNdNe0Kb8D9VeTc1Fw,f3+HEw7bS++sH713ZnOX6Q,,,N,0,0,,,2012-06-19 11:46,2012-06-20 10:09,admin,admin,,,
94,82352,773,10454,849,1,100,N,N,N,CP_Drtn,TT_Task,DT_FixedDUR2,RV_OK,TK_Complete,4229PPL90,"P.O for 8"""" pipeline",,,,0,0,0,0,40,0,0,0,,2012-02-27 00:00,2012-02-29 00:00,2013-07-22 08:00,2013-07-22 08:00,,2012-06-02 00:00,2012-06-02 00:00,,,2012-03-04 08:00,2012-03-08 16:00,,,,,PT_Normal,,,,,HZXajrR7iUqoFlcPRcHfJA,Ome5oXQSREmwSDyRtaFKtQ,,,N,0,0,,,2012-06-19 11:46,2012-06-20 10:09,admin,admin,,,
95,82353,773,10454,850,1,100,N,N,N,CP_Drtn,TT_Task,DT_FixedDrtn,RV_OK,TK_Complete,4229PPL10,"Bidding for 8"""" pipeline",,,,0,0,0,0,280,0,0,0,,2011-11-01 00:00,2011-11-21 00:00,2013-07-22 08:00,2013-07-22 08:00,,2012-06-02 00:00,2012-06-02 00:00,,,2011-12-06 08:00,2012-01-21 16:00,,,,,PT_Normal,,,,,ARAqSqsIkU2oo2f+uu6itw,,,,N,0,0,,,2012-06-19 11:46,2012-06-20 10:09,admin,admin,,,
96,82354,773,10454,849,1,100,N,N,N,CP_Drtn,TT_Task,DT_FixedDrtn,RV_OK,TK_Complete,4229PPL20,"Receive revised commercial offers for 8""""pipeline",,,,0,0,0,0,40,0,0,0,,2012-01-09 08:00,2012-01-24 00:00,2013-07-22 08:00,2013-07-22 08:00,,2012-06-02 00:00,2012-06-02 00:00,,,2012-01-09 08:00,2012-01-15 16:00,,,,,PT_Normal,,,,,cp/qKMxhjkWBfXpkGuyBWQ,,,,N,0,0,,,2012-06-19 11:46,2012-06-20 10:09,admin,admin,,,
97,82355,773,10454,849,1,100,N,N,N,CP_Drtn,TT_LOE,DT_FixedDUR2,RV_OK,TK_Complete,A1150,"T.E.R for 8""""line pipe",,,,0,0,0,0,231,0,0,0,,2011-11-22 00:00,2012-01-08 16:00,,,,,,,,2012-01-22 08:00,2012-03-01 15:00,,,,,PT_Normal,,,,,HZA8UF+kzUmNk6tOdDrLSw,7uF5bGdtl0SfRYxvT5GJ0w,,,N,0,0,,,2012-06-19 11:46,2012-06-19 11:46,admin,admin,,,
98,82356,773,10454,849,1,100,N,N,N,CP_Drtn,TT_LOE,DT_FixedDUR2,RV_OK,TK_Complete,A1600,"MRP for 8"""" pipeline",,,,0,0,0,0,40,0,0,0,,2012-02-21 00:00,2012-02-26 00:00,,,,,,,,2012-03-04 08:00,2012-03-08 16:00,,,,,PT_Normal,,,,,bJOuer/FtUOlWzK3975Kvw,J/NOEfck6UScfk4m4xI+Hw,,,N,0,0,,,2012-06-19 11:46,2012-06-19 11:46,admin,admin,,,
99,82357,773,10451,849,1,100,N,N,N,CP_Drtn,TT_LOE,DT_FixedDUR2,RV_OK,TK_Complete,A1220,T.E.R for kamos ring,,,,0,0,0,0,151,0,0,0,,2011-11-13 00:00,2011-11-20 00:00,,,,,,,,2011-12-04 08:00,2011-12-28 15:00,,,,,PT_Normal,,,,,0LWEhp5pLkGB1tYLfUUTaA,VIXmqmrRAE6RPd+GoKSRMQ,,,N,0,0,,,2012-06-19 11:46,2012-06-19 11:46,admin,admin,,,
100,82358,773,10451,849,1,100,N,N,N,CP_Drtn,TT_LOE,DT_FixedDUR2,RV_OK,TK_Complete,A1540,MRP for kamos ring,,,,0,0,0,0,40,0,0,0,,2011-12-21 00:00,2011-12-26 00:00,,,,,,,,2012-01-08 08:00,2012-01-12 16:00,,,,,PT_Normal,,,,,bPXLGU83nkeLgdvq/TJ14g,AmLZVJIw7EqS3cFL1qtY5Q,,,N,0,0,,,2012-06-19 11:46,2012-06-19 11:46,admin,admin,,,
101,82359,773,10451,849,1,100,N,N,N,CP_Drtn,TT_Task,DT_FixedDUR2,RV_OK,TK_Complete,4229PKR80,L.C issued by Gupco,,,,0,0,0,0,8,0,0,0,,2012-01-02 00:00,2012-01-02 00:00,2013-09-26 16:00,2013-09-26 16:00,,2012-06-02 00:00,2012-06-02 00:00,,,2012-01-01 08:00,2012-01-01 16:00,,,,,PT_Normal,,,,,qKXk2zLSzEmfaeRSBof4gw,3jITFGtr+kiLENdPR+Y//g,,,N,0,0,,,2012-06-19 11:46,2012-06-20 10:09,admin,admin,,,
102,82360,773,10451,849,1,100,N,N,N,CP_Drtn,TT_Task,DT_FixedDUR2,RV_OK,TK_Complete,4229PKR40,commercial evaluation & bid committee for Kamos ring,,,,0,0,0,0,80,0,0,0,,2011-11-27 00:00,2011-12-07 00:00,2013-09-26 16:00,2013-09-26 16:00,,2012-06-02 00:00,2012-06-02 00:00,,,2011-12-11 08:00,2011-12-22 16:00,,,,,PT_Normal,,,,,a9I2I4cA+Em+sy0jHS72nQ,3ro8V+iM2kWWUdMn3ENIug,,,N,0,0,,,2012-06-19 11:46,2012-06-20 10:09,admin,admin,,,
103,82361,773,10451,849,1,100,N,N,N,CP_Drtn,TT_Task,DT_FixedDUR2,RV_OK,TK_Complete,4229PKR60,F.O.C for Kamos ring,,,,0,0,0,0,24,0,0,0,,2011-12-12 00:00,2011-12-20 00:00,2013-09-26 16:00,2013-09-26 16:00,,2012-06-02 00:00,2012-06-02 00:00,,,2012-01-03 08:00,2012-01-05 16:00,,,,,PT_Normal,,,,,nHetQFqly0C3jpRHBGqbow,aOz6IP5TRUi7G/HwE9JsZA,,,N,0,0,,,2012-06-19 11:46,2012-06-20 10:09,admin,admin,,,
104,82362,773,10451,849,1,100,N,N,N,CP_Drtn,TT_Task,DT_FixedDUR2,RV_OK,TK_Complete,4229PKR70,P.O for Kamos ring,,,,0,0,0,0,32,0,0,0,,2011-12-27 08:00,2012-01-01 16:00,2013-09-26 16:00,2013-09-26 16:00,,2012-06-02 00:00,2012-06-02 00:00,,,2011-12-27 08:00,2012-01-01 16:00,,,,,PT_Normal,,,,,vtG91w9G+kWUmiMEkrspig,4jZsUwnCVkyez1CGClmI4w,,,N,0,0,,,2012-06-19 11:46,2012-06-20 10:09,admin,admin,,,
105,82363,773,10451,850,1,100,N,N,N,CP_Drtn,TT_Task,DT_FixedDrtn,RV_OK,TK_Complete,4229PKR20,Bidding for Kamos ring,,,,0,0,0,0,200,0,0,0,,2011-10-06 00:00,2011-11-12 00:00,2013-09-26 16:00,2013-09-26 16:00,,2012-06-02 00:00,2012-06-02 00:00,,,2011-11-01 08:00,2011-11-25 16:00,,,,,PT_Normal,,,,,BhTABtp0DU2VC66zLIbYeQ,aqDgHd8b8kmS1ml83ufGuA,,,N,0,0,,,2012-06-19 11:46,2012-06-20 10:09,admin,admin,,,
106,82364,773,10451,849,1,100,N,N,N,CP_Drtn,TT_Task,DT_FixedDrtn,RV_OK,TK_Complete,4229PKR30,Receive revised commercial offers for Kamos ring,,,,0,0,0,0,40,0,0,0,,2011-11-21 00:00,2011-11-27 00:00,2013-09-26 16:00,2013-09-26 16:00,,2012-06-02 00:00,2012-06-02 00:00,,,2011-12-04 08:00,2011-12-08 16:00,,,,,PT_Normal,,,,,EVOEN6/JW0uOEaOYHgkCcw,cI8XFbOGtEiLgTZ3toUOuA,,,N,0,0,,,2012-06-19 11:46,2012-06-20 10:09,admin,admin,,,
107,82365,773,10451,849,1,100,N,N,N,CP_Drtn,TT_Task,DT_FixedDUR2,RV_OK,TK_Complete,4229PKR10,Issue RFQ for Kamos ring,,,,0,0,0,0,16,0,0,0,,2011-10-05 00:00,2011-10-05 00:00,2013-09-26 16:00,2013-09-26 16:00,,2012-06-02 00:00,2012-06-02 00:00,,,2011-10-30 08:00,2011-10-31 16:00,,,,,PT_Normal,,,,,t4ns+rJmXk+w24pI+Qk9dA,MF8ACxsV2EGTaIRXL+YVVw,,,N,0,0,,,2012-06-19 11:46,2012-06-20 10:09,admin,admin,,,
108,82366,773,10451,850,1,100,N,N,N,CP_Drtn,TT_Task,DT_FixedDUR2,RV_OK,TK_Complete,4229PKR90,Fabrication upto R.F.S,,,,0,0,0,0,728,0,0,0,,2012-01-02 00:00,2012-03-04 00:00,2013-09-26 16:00,2013-09-26 16:00,,2012-06-02 00:00,2012-06-02 00:00,,,2012-01-28 08:00,2012-04-27 16:00,,,,,PT_Normal,,,,,UUQDKLwAqkmPRrWCvyrJdA,WR5vIkiNPkm7l0vU5ocNsA,,,N,0,0,,,2012-06-19 11:46,2012-06-20 10:09,admin,admin,,,
109,82367,773,10451,851,1,100,N,N,N,CP_Drtn,TT_Task,DT_FixedDUR2,RV_OK,TK_Complete,4229PKR100,Delivery upto site,,,,0,0,0,0,240,0,0,0,,2012-03-05 00:00,2012-03-24 00:00,2013-09-26 16:00,2013-09-26 16:00,,2012-06-02 00:00,2012-06-02 00:00,,,2012-04-02 08:00,2012-05-01 16:00,,,,,PT_Normal,,,,,N6RyWhn170a1mQJI6EnGxg,o3ktBGgPHkOGVVqCO95mXA,,,N,0,0,,,2012-06-19 11:46,2012-06-20 10:09,admin,admin,,,
110,82368,773,10451,849,1,100,N,N,N,CP_Drtn,TT_Task,DT_FixedDUR2,RV_OK,TK_Complete,4229PKR50,Client approval on bid committee reccomendation,,,,0,0,0,0,16,0,0,0,,2011-12-07 00:00,2011-12-11 00:00,2013-09-26 16:00,2013-09-26 16:00,,2012-06-02 00:00,2012-06-02 00:00,,,2012-01-01 08:00,2012-01-02 16:00,,,,,PT_Normal,,,,,qzHZbnNj70S5Jr3SE11dmQ,mQau4KbKWE2qc5jKaiAg/A,,,N,0,0,,,2012-06-19 11:46,2012-06-20 10:09,admin,admin,,,
111,82369,773,10452,850,1,100,N,N,N,CP_Drtn,TT_Task,DT_FixedDrtn,RV_OK,TK_Complete,4229PAF20,Bidding for  Anchor Flanges,,,,0,0,0,0,200,0,0,0,,2011-10-27 00:00,2011-12-01 00:00,2013-08-21 08:00,2013-08-21 08:00,,2012-06-02 00:00,2012-06-02 00:00,,,2011-11-01 08:00,2011-11-25 16:00,,,,,PT_Normal,,,,,hbzQ4qT6EUC+HdEQUcenaA,3gr+rFvxxEqInjchjLuZiw,,,N,0,0,,,2012-06-19 11:46,2012-06-20 10:09,admin,admin,,,
112,82370,773,10452,849,1,100,N,N,N,CP_Drtn,TT_Task,DT_FixedDrtn,RV_OK,TK_Complete,4229PAF30,Receive revised commercial offers for  Anchor Flanges,,,,0,0,0,0,40,0,0,0,2012-01-08 00:00,2012-01-08 08:00,2012-01-12 00:00,2013-08-21 08:00,2013-08-21 08:00,,2012-06-02 00:00,2012-06-02 00:00,,,2012-01-08 08:00,2012-01-12 16:00,,,,CS_MSOA,PT_Normal,,,,,xfAJ1CBS9EmAwxMSjxHglw,YZqtY743iECtZCI8oAzGEw,,,N,0,0,,,2012-06-19 11:46,2012-06-20 10:09,admin,admin,,,
113,82371,773,10452,849,1,100,N,N,N,CP_Drtn,TT_Task,DT_FixedDUR2,RV_OK,TK_Complete,4229PAF10,Issue RFQ for Anchor Flanges,,,,0,0,0,0,16,0,0,0,,2011-10-25 00:00,2011-10-26 00:00,2013-08-21 08:00,2013-08-21 08:00,,2012-06-02 00:00,2012-06-02 00:00,,,2011-10-30 08:00,2011-10-31 16:00,,,,,PT_Normal,,,,,MgdlQogXOE+GslQXqcQJSw,MrFyXV/ZwEKiOJ2hcnyoRg,,,N,0,0,,,2012-06-19 11:46,2012-06-20 10:09,admin,admin,,,
114,82372,773,10452,850,1,100,N,N,N,CP_Drtn,TT_Task,DT_FixedDUR2,RV_OK,TK_Complete,4229PAF90,Fabrication upto R.F.S,,,,0,0,0,0,448,0,0,0,,2012-02-28 00:00,2012-05-15 00:00,2013-08-28 08:00,2013-08-28 08:00,,2012-06-07 16:00,2012-06-07 16:00,,,2012-03-09 08:00,2012-05-03 16:00,,,,,PT_Normal,,,,,v4DHZihK7Eul9egyDJ8i0A,qgd69YrpDkOI+oaKInsYUg,,,N,0,0,,,2012-06-19 11:46,2012-06-20 10:09,admin,admin,,,
115,82373,773,10452,851,1,0,N,N,N,CP_Drtn,TT_Task,DT_FixedDUR2,RV_OK,TK_Active,4229PAF100,Delivery upto site,,3584,1992,240,0,0,0,240,0,0,0,,2012-05-18 00:00,,2013-08-28 08:00,2013-09-26 16:00,,2012-06-08 08:00,2012-07-07 16:00,2012-06-08 08:00,2012-07-07 16:00,2012-06-08 08:00,2012-07-07 16:00,,2013-08-28 08:00,2013-09-26 16:00,,PT_Normal,,,,,vJdCqKurAUSGcxBb8YI7kg,oyg01drvjUGu7ia9nCu4jQ,,,N,0,0,,,2012-06-19 11:46,2012-06-20 09:59,admin,admin,,,
116,82374,773,10452,849,1,100,N,N,N,CP_Drtn,TT_Task,DT_FixedDUR2,RV_OK,TK_Complete,4229PAF50,Client approval on bid committee reccomendation,,,,0,0,0,0,16,0,0,0,,2012-02-07 00:00,2012-02-09 00:00,2013-08-21 08:00,2013-08-21 08:00,,2012-06-02 00:00,2012-06-02 00:00,,,2012-03-18 08:00,2012-03-19 16:00,,,,,PT_Normal,,,,,d+KvExfBokC38yteunNmsQ,HhBbqT7mmkq6ky9/qu9Xrw,,,N,0,0,,,2012-06-19 11:46,2012-06-20 10:09,admin,admin,,,
117,82375,773,10452,849,1,0,N,N,N,CP_Drtn,TT_Task,DT_FixedDUR2,RV_OK,TK_NotStart,4229PAF80,L.C issued by Gupco,,2464,0,40,0,0,0,40,0,0,0,,,,2013-08-21 08:00,2013-08-27 16:00,,2012-06-03 08:00,2012-06-07 16:00,2012-06-03 08:00,2012-06-07 16:00,2012-06-03 08:00,2012-06-07 16:00,,2013-08-21 08:00,2013-08-27 16:00,,PT_Normal,,,,,4Vmkmh3Jn0mqEfBzFWXA2g,Kd1Io08brUu0r3ObTHOVHg,,,N,0,0,,,2012-06-19 11:46,2012-06-20 09:59,admin,admin,,,
118,82376,773,10452,849,1,100,N,N,N,CP_Drtn,TT_Task,DT_FixedDUR2,RV_OK,TK_Complete,4229PAF40,commercial evaluation & bid committee for  Anchor Flanges,,,,0,0,0,0,80,0,0,0,,2012-01-15 08:00,2012-02-06 00:00,2013-08-21 08:00,2013-08-21 08:00,,2012-06-02 00:00,2012-06-02 00:00,,,2012-01-15 08:00,2012-01-29 16:00,,,,,PT_Normal,,,,,uwpBpmkhtEyHBCgagO4M+A,g31Sg/5OdEWgMblFud4aKg,,,N,0,0,,,2012-06-19 11:46,2012-06-20 10:09,admin,admin,,,
119,82377,773,10452,849,1,100,N,N,N,CP_Drtn,TT_Task,DT_FixedDUR2,RV_OK,TK_Complete,4229PAF60,F.O.C for  Anchor Flanges,,,,0,0,0,0,24,0,0,0,,2012-02-12 00:00,2012-02-13 00:00,2013-08-21 08:00,2013-08-21 08:00,,2012-06-02 00:00,2012-06-02 00:00,,,2012-03-04 08:00,2012-03-06 16:00,,,,,PT_Normal,,,,,Qw1Hh/EqjEu5FfMhI0LmpA,r1kiUYJl5E6F8x873gkW3Q,,,N,0,0,,,2012-06-19 11:46,2012-06-20 10:09,admin,admin,,,
120,82378,773,10452,849,1,100,N,N,N,CP_Drtn,TT_Task,DT_FixedDUR2,RV_OK,TK_Complete,4229PAF70,P.O for  Anchor Flanges,,,,0,0,0,0,40,0,0,0,,2012-02-28 00:00,2012-02-28 00:00,2013-08-21 08:00,2013-08-21 08:00,,2012-06-02 00:00,2012-06-02 00:00,,,2012-03-04 08:00,2012-03-08 16:00,,,,,PT_Normal,,,,,bQP12w87eky0dKS2BZIzIQ,/iUKwzSdjUWnbLh4jcgmjw,,,N,0,0,,,2012-06-19 11:46,2012-06-20 10:09,admin,admin,,,
121,82379,773,10452,849,1,100,N,N,N,CP_Drtn,TT_LOE,DT_FixedDUR2,RV_OK,TK_Complete,A1160,T.E.R for anchor flanges,,,,0,0,0,0,120,0,0,0,,2011-12-06 08:00,2012-01-05 16:00,,,,,,,,2011-12-06 08:00,2011-12-26 16:00,,,,,PT_Normal,,,,,GOXJv9FPXESg5oD3dEJ0Ow,KcMGieJ0zEOkCUsRzSRnVg,,,N,0,0,,,2012-06-19 11:46,2012-06-19 11:46,admin,admin,,,
122,82380,773,10452,849,1,100,N,N,N,CP_Drtn,TT_LOE,DT_FixedDUR2,RV_OK,TK_Complete,A1590,MRP for anchor flanges,,,,0,0,0,0,40,0,0,0,,2012-02-14 00:00,2012-02-28 00:00,,,,,,,,2012-03-04 08:00,2012-03-08 16:00,,,,,PT_Normal,,,,,4i8lskICGEGS6UCWxaKpww,Pdlj45l+qUqauuzEbIoH+w,,,N,0,0,,,2012-06-19 11:46,2012-06-19 11:46,admin,admin,,,
123,82381,773,10458,850,1,100,N,N,N,CP_Drtn,TT_Task,DT_FixedDrtn,RV_OK,TK_Complete,4229PIJ20,Bidding for Isolating joints,,,,0,0,0,0,200,0,0,0,,2011-10-20 00:00,2011-11-10 00:00,2013-08-21 08:00,2013-08-21 08:00,,2012-06-02 00:00,2012-06-02 00:00,,,2011-11-01 08:00,2011-11-25 16:00,,,,,PT_Normal,,,,,LdXXefqWfESuI6pPSNL2oQ,bBQedupqd0KFz1dIppHZuQ,,,N,0,0,,,2012-06-19 11:46,2012-06-20 10:09,admin,admin,,,
124,82382,773,10458,849,1,100,N,N,N,CP_Drtn,TT_Task,DT_FixedDrtn,RV_OK,TK_Complete,4229PIJ30,Receive revised commercial offers for Isolating joints,,,,0,0,0,0,40,0,0,0,,2011-12-13 08:00,2011-12-21 00:00,2013-08-21 08:00,2013-08-21 08:00,,2012-06-02 00:00,2012-06-02 00:00,,,2011-12-13 08:00,2011-12-19 16:00,,,,,PT_Normal,,,,,S7vPeJZcAEiq/EV5uJk0UQ,klxYrCfhKEa29w2695+dWw,,,N,0,0,,,2012-06-19 11:46,2012-06-20 10:09,admin,admin,,,
125,82383,773,10458,849,1,100,N,N,N,CP_Drtn,TT_Task,DT_FixedDUR2,RV_OK,TK_Complete,4229PIJ10,Issue RFQ for Isolating joints,,,,0,0,0,0,16,0,0,0,,2011-10-19 00:00,2011-10-19 00:00,2013-08-21 08:00,2013-08-21 08:00,,2012-06-02 00:00,2012-06-02 00:00,,,2011-10-30 08:00,2011-10-31 16:00,,,,,PT_Normal,,,,,qBWx6+LdiUiqUh0RCgjaog,as1huikPDUKtD+tVXnVG5w,,,N,0,0,,,2012-06-19 11:46,2012-06-20 10:09,admin,admin,,,
126,82384,773,10458,850,1,0,N,N,N,CP_Drtn,TT_Task,DT_FixedDUR2,RV_OK,TK_Active,4229PIJ90,Fabrication upto R.F.S,,3472,0,0,0,0,0,784,0,0,0,,2012-02-03 00:00,,2013-08-27 16:00,2013-08-27 16:00,2012-05-12 16:00,2012-06-08 08:00,2012-06-08 08:00,2012-06-08 08:00,2012-06-08 08:00,2012-03-09 08:00,2012-06-14 16:00,,2013-08-27 16:00,2013-08-27 16:00,,PT_Normal,,,,,95g1SYPhrUCrTWnZ1RSMLw,wggRnWZrx0WgSPrgNG50cA,,,N,0,0,,,2012-06-19 11:46,2012-06-20 09:59,admin,admin,,,
127,82385,773,10458,851,1,0,N,N,N,CP_Drtn,TT_Task,DT_FixedDUR2,RV_OK,TK_NotStart,4229PIJ100,Delivery upto site,,3584,1992,240,0,0,0,240,0,0,0,,,,2013-08-28 08:00,2013-09-26 16:00,,2012-06-08 08:00,2012-07-07 16:00,2012-06-08 08:00,2012-07-07 16:00,2012-06-08 08:00,2012-07-07 16:00,,2013-08-28 08:00,2013-09-26 16:00,,PT_Normal,,,,,O34o7GO+5Eit8Epr6Be3RA,GuMhgm4xLky6jrSmhJlN2A,,,N,0,0,,,2012-06-19 11:46,2012-06-20 09:59,admin,admin,,,
128,82386,773,10458,849,1,100,N,N,N,CP_Drtn,TT_Task,DT_FixedDUR2,RV_OK,TK_Complete,4229PIJ50,Client approval on bid committee reccomendation,,,,0,0,0,0,16,0,0,0,,2011-12-22 00:00,2012-01-03 00:00,2013-08-21 08:00,2013-08-21 08:00,,2012-06-02 00:00,2012-06-02 00:00,,,2012-01-03 08:00,2012-01-04 16:00,,,,,PT_Normal,,,,,9TaQjP36K0WMd1ElVhWE2Q,q/oN1VQYJ0i3Kec9Fshb9w,,,N,0,0,,,2012-06-19 11:46,2012-06-20 10:09,admin,admin,,,
129,82387,773,10458,849,1,0,N,N,N,CP_Drtn,TT_Task,DT_FixedDUR2,RV_OK,TK_NotStart,4229PIJ80,L.C issued by Gupco,,2464,0,40,0,0,0,40,0,0,0,,,,2013-08-21 08:00,2013-08-27 16:00,,2012-06-03 08:00,2012-06-07 16:00,2012-06-03 08:00,2012-06-07 16:00,2012-06-03 08:00,2012-06-07 16:00,,2013-08-21 08:00,2013-08-27 16:00,,PT_Normal,,,,,pq+WhiUNuEev1o2OWgRB5w,/MEYDubBK0K6nVus4MoXaw,,,N,0,0,,,2012-06-19 11:46,2012-06-20 09:59,admin,admin,,,
130,82388,773,10458,849,1,100,N,N,N,CP_Drtn,TT_Task,DT_FixedDUR2,RV_OK,TK_Complete,4229PIJ40,commercial evaluation & bid committee for Isolating joints,,,,0,0,0,0,80,0,0,0,,2011-12-13 00:00,2011-12-21 00:00,2013-08-21 08:00,2013-08-21 08:00,,2012-06-02 00:00,2012-06-02 00:00,,,2011-12-22 08:00,2012-01-04 16:00,,,,,PT_Normal,,,,,gPZ+y5N1GUWVggiillezQQ,+GIhOJsP5EuRDusTK86C3Q,,,N,0,0,,,2012-06-19 11:46,2012-06-20 10:09,admin,admin,,,
131,82389,773,10458,849,1,100,N,N,N,CP_Drtn,TT_Task,DT_FixedDUR2,RV_OK,TK_Complete,4229PIJ60,F.O.C for Isolating joints,,,,0,0,0,0,24,0,0,0,,2012-01-04 00:00,2012-01-23 16:00,2013-08-21 08:00,2013-08-21 08:00,,2012-06-02 00:00,2012-06-02 00:00,,,2012-01-23 08:00,2012-01-26 16:00,,,,,PT_Normal,,,,,WMuMMBd6okS/smGkpkqW2A,m/zaAJ0juUCO2Ynoa4AOIg,,,N,0,0,,,2012-06-19 11:46,2012-06-20 10:09,admin,admin,,,
132,82390,773,10458,849,1,100,N,N,N,CP_Drtn,TT_Task,DT_FixedDUR2,RV_OK,TK_Complete,4229PIJ70,P.O for Isolating joints,,,,0,0,0,0,40,0,0,0,,2012-02-01 08:00,2012-02-02 00:00,2013-08-21 08:00,2013-08-21 08:00,,2012-06-02 00:00,2012-06-02 00:00,,,2012-02-01 08:00,2012-02-07 16:00,,,,,PT_Normal,,,,,QF4cH5Rdikavmdmaggnmcw,51qm2usYr0+stGttA74aog,,,N,0,0,,,2012-06-19 11:46,2012-06-20 10:09,admin,admin,,,
133,82391,773,10458,849,1,100,N,N,N,CP_Drtn,TT_LOE,DT_FixedDUR2,RV_OK,TK_Complete,A1170,T.E.R for isolating joints,,,,0,0,0,0,151,0,0,0,,2011-11-13 00:00,2011-12-08 00:00,,,,,,,,2011-12-04 08:00,2011-12-28 15:00,,,,,PT_Normal,,,,,xdnBgYHaJkOBGHI++Iq6Gg,/RPpbpU2kkufsg8WhrxLvg,,,N,0,0,,,2012-06-19 11:46,2012-06-19 11:46,admin,admin,,,
134,82392,773,10458,849,1,100,N,N,N,CP_Drtn,TT_LOE,DT_FixedDUR2,RV_OK,TK_Complete,A1570,MRP for isolating joints,,,,0,0,0,0,32,0,0,0,,2012-01-24 00:00,2012-01-31 00:00,,,,,,,,2012-01-29 08:00,2012-02-01 16:00,,,,,PT_Normal,,,,,OuNkAKGMzES/9F604SXRfA,Vx9as0BmD0SZpsBNAJdc+g,,,N,0,0,,,2012-06-19 11:46,2012-06-19 11:46,admin,admin,,,
135,82393,773,10459,850,1,100,N,N,N,CP_Drtn,TT_Task,DT_FixedDrtn,RV_OK,TK_Complete,4229PHS20,Bidding for Heat shrink sleeves,,,,0,0,0,0,200,0,0,0,,2011-10-13 00:00,2011-11-02 00:00,2013-09-26 16:00,2013-09-26 16:00,,2012-06-02 00:00,2012-06-02 00:00,,,2011-11-01 08:00,2011-11-25 16:00,,,,,PT_Normal,,,,,01lTaFdmUEew8G1CNmTJcw,07sjOHjKsE6iDWYX7870iw,,,N,0,0,,,2012-06-19 11:46,2012-06-20 10:09,admin,admin,,,
136,82394,773,10459,849,1,100,N,N,N,CP_Drtn,TT_Task,DT_FixedDrtn,RV_OK,TK_Complete,4229PHS30,Receive revised commercial offers for Heat shrink sleeves,,,,0,0,0,0,40,0,0,0,,2011-12-06 08:00,2011-12-08 00:00,2013-09-26 16:00,2013-09-26 16:00,,2012-06-02 00:00,2012-06-02 00:00,,,2011-12-06 08:00,2011-12-12 16:00,,,,,PT_Normal,,,,,SeJDn9cEx0OnYR9w4a7e4w,iD0sa1SMaEiOKBRQ1O2o6g,,,N,0,0,,,2012-06-19 11:46,2012-06-20 10:09,admin,admin,,,
137,82395,773,10459,849,1,100,N,N,N,CP_Drtn,TT_Task,DT_FixedDUR2,RV_OK,TK_Complete,4229PHS10,Issue RFQ for Heat shrink sleeves,,,,0,0,0,0,16,0,0,0,,2011-10-12 00:00,2011-10-12 00:00,2013-09-26 16:00,2013-09-26 16:00,,2012-06-02 00:00,2012-06-02 00:00,,,2011-10-30 08:00,2011-10-31 16:00,,,,,PT_Normal,,,,,kKWkcMf8lUaPy23UeLFxug,jfLoOt8Z6kGAt+HgfFvK3w,,,N,0,0,,,2012-06-19 11:46,2012-06-20 10:09,admin,admin,,,
138,82396,773,10459,850,1,100,N,N,N,CP_Drtn,TT_Task,DT_FixedDUR2,RV_OK,TK_Complete,4229PHS90,Fabrication upto R.F.S,,,,0,0,0,0,392,0,0,0,,2012-01-24 00:00,2012-03-22 00:00,2013-09-26 16:00,2013-09-26 16:00,,2012-06-02 00:00,2012-06-02 00:00,,,2012-01-30 08:00,2012-03-18 16:00,,,,,PT_Normal,,,,,3H2nZpBjrUeyoN3T29AxwQ,LLxu6IKLk0yOdCX45wxHIQ,,,N,0,0,,,2012-06-19 11:46,2012-06-20 10:09,admin,admin,,,
139,82397,773,10459,851,1,100,N,N,N,CP_Drtn,TT_Task,DT_FixedDUR2,RV_OK,TK_Complete,4229PHS100,Delivery upto site,,,,0,0,0,0,120,0,0,0,,2012-03-23 00:00,2012-05-27 00:00,2013-09-26 16:00,2013-09-26 16:00,,2012-06-02 00:00,2012-06-02 00:00,,,2012-03-31 08:00,2012-04-14 16:00,,,,,PT_Normal,,,,,njpmd2lqf0yVVqHmptCFag,/LOUFXStZU20NZFdwfal8w,,,N,0,0,,,2012-06-19 11:46,2012-06-20 10:09,admin,admin,,,
140,82398,773,10459,849,1,100,N,N,N,CP_Drtn,TT_Task,DT_FixedDUR2,RV_OK,TK_Complete,4229PHS50,Client approval on bid committee reccomendation,,,,0,0,0,0,16,0,0,0,,2011-12-22 00:00,2012-01-03 00:00,2013-09-26 16:00,2013-09-26 16:00,,2012-06-02 00:00,2012-06-02 00:00,,,2012-01-01 08:00,2012-01-02 16:00,,,,,PT_Normal,,,,,HLof52w8aEylOcoLVWtDIA,iiL5R/hBgECY7+6p+U01Gg,,,N,0,0,,,2012-06-19 11:46,2012-06-20 10:09,admin,admin,,,
141,82399,773,10459,849,1,100,N,N,N,CP_Drtn,TT_Task,DT_FixedDUR2,RV_OK,TK_Complete,4229PHS80,L.C issued by Gupco (not Applicable),,,,0,0,0,0,40,0,0,0,,2012-01-23 00:00,2012-01-23 00:00,2013-09-26 16:00,2013-09-26 16:00,,2012-06-02 00:00,2012-06-02 00:00,,,2012-01-22 08:00,2012-01-29 16:00,,,,,PT_Normal,,,,,X5ZfQor/ek+YGIyeV9FgZA,P+ALjRxymUWKulYnQG96Og,,,N,0,0,,,2012-06-19 11:46,2012-06-20 10:09,admin,admin,,,
142,82400,773,10459,849,1,100,N,N,N,CP_Drtn,TT_Task,DT_FixedDUR2,RV_OK,TK_Complete,4229PHS40,commercial evaluation & bid committee for Heat shrink sleeves,,,,0,0,0,0,80,0,0,0,,2011-12-09 00:00,2011-12-12 00:00,2013-09-26 16:00,2013-09-26 16:00,,2012-06-02 00:00,2012-06-02 00:00,,,2011-12-14 08:00,2011-12-27 16:00,,,,,PT_Normal,,,,,UeuEgVGXvU2DdE6T5F8fvQ,sKwTyDY27U2BB6/qHgw6OQ,,,N,0,0,,,2012-06-19 11:46,2012-06-20 10:09,admin,admin,,,
143,82401,773,10459,849,1,100,N,N,N,CP_Drtn,TT_Task,DT_FixedDUR2,RV_OK,TK_Complete,4229PHS60,F.O.C for Heat shrink sleeves,,,,0,0,0,0,24,0,0,0,,2012-01-04 00:00,2012-01-23 00:00,2013-09-26 16:00,2013-09-26 16:00,,2012-06-02 00:00,2012-06-02 00:00,,,2012-01-03 08:00,2012-01-05 16:00,,,,,PT_Normal,,,,,BTcu19pnqEGrSvl+s5fI0w,iXQwi6oD8EyafkjSeVpArg,,,N,0,0,,,2012-06-19 11:46,2012-06-20 10:09,admin,admin,,,
144,82402,773,10459,849,1,100,N,N,N,CP_Drtn,TT_Task,DT_FixedDUR2,RV_OK,TK_Complete,4229PHS70,P.O for Heat shrink sleeves,,,,0,0,0,0,40,0,0,0,,2012-01-30 08:00,2012-02-05 16:00,2013-09-26 16:00,2013-09-26 16:00,,2012-06-02 00:00,2012-06-02 00:00,,,2012-01-30 08:00,2012-02-05 16:00,,,,,PT_Normal,,,,,DJLp7kzXCkeXVlo5eA9Zbg,vcNgRPq2gE2+G9/qjHSUDA,,,N,0,0,,,2012-06-19 11:46,2012-06-20 10:09,admin,admin,,,
145,82403,773,10459,849,1,100,N,N,N,CP_Drtn,TT_LOE,DT_FixedDUR2,RV_OK,TK_Complete,A1210,T.E.R for heat shrink sleeves,,,,0,0,0,0,151,0,0,0,,2011-11-03 00:00,2011-12-05 00:00,,,,,,,,2011-12-04 08:00,2011-12-28 15:00,,,,,PT_Normal,,,,,xzVjhRCDvU6knMk4dgoRzw,TRfzN9uTK0OCBl07/0dyfg,,,N,0,0,,,2012-06-19 11:46,2012-06-19 11:46,admin,admin,,,
146,82404,773,10459,849,1,100,N,N,N,CP_Drtn,TT_LOE,DT_FixedDUR2,RV_OK,TK_Complete,A1550,MRP for heat shrink sleeves,,,,0,0,0,0,40,0,0,0,,2012-01-24 08:00,2012-01-30 16:00,,,,,,,,2012-01-29 08:00,2012-02-02 16:00,,,,,PT_Normal,,,,,OFSyd6ZvPECcpIMpXm2EJg,5Z/xpS+fjESkAsXx92SJWw,,,N,0,0,,,2012-06-19 11:46,2012-06-19 11:46,admin,admin,,,
147,82405,773,10460,850,1,100,N,N,N,CP_Drtn,TT_Task,DT_FixedDrtn,RV_OK,TK_Complete,4229P4220,Bidding for Flanges,,,,0,0,0,0,16,0,0,0,,2011-11-03 00:00,2011-11-28 00:00,2013-07-28 08:00,2013-07-28 08:00,,2012-06-02 00:00,2012-06-02 00:00,,,2011-12-03 08:00,2011-12-04 16:00,,,,,PT_Normal,,,,,6RDdOiQW6EGhOccdlrvTvg,4dk1kLWr8Uipwbh1A4uC1Q,,,N,0,0,,,2012-06-19 11:46,2012-06-20 10:09,admin,admin,,,
148,82406,773,10460,849,1,100,N,N,N,CP_Drtn,TT_Task,DT_FixedDrtn,RV_OK,TK_Complete,4229PFL30,Receive revised commercial offers for Flanges,,,,0,0,0,0,40,0,0,0,,2012-01-19 00:00,2012-01-24 00:00,2013-07-28 08:00,2013-07-28 08:00,,2012-06-02 00:00,2012-06-02 00:00,,,2012-01-29 08:00,2012-02-02 16:00,,,,,PT_Normal,,,,,T7EppinxEkq2hiNjjKJ3mg,9VDpY57a3UudBJDUjqJGDQ,,,N,0,0,,,2012-06-19 11:46,2012-06-20 10:09,admin,admin,,,
149,82407,773,10460,849,1,100,N,N,N,CP_Drtn,TT_Task,DT_FixedDUR2,RV_OK,TK_Complete,4229PFL10,Issue RFQ for Flanges,,,,0,0,0,0,16,0,0,0,,2011-10-31 00:00,2011-11-02 00:00,2013-07-28 08:00,2013-07-28 08:00,,2012-06-02 00:00,2012-06-02 00:00,,,2011-12-04 08:00,2011-12-05 16:00,,,,,PT_Normal,,,,,qWpMX4iKuESUal8SNYPwWw,Ogmu6kUj7USG0/qhOzLW0g,,,N,0,0,,,2012-06-19 11:46,2012-06-20 10:09,admin,admin,,,
150,82408,773,10460,850,1,0,N,N,N,CP_Drtn,TT_Task,DT_FixedDUR2,RV_OK,TK_Active,4229PFL90,Fabrication upto R.F.S,,3272,0,144,0,0,0,896,0,0,0,,2012-02-28 00:00,,2013-07-28 08:00,2013-08-14 16:00,,2012-06-02 08:00,2012-06-19 16:00,2012-06-02 08:00,2012-06-19 16:00,2012-03-03 08:00,2012-06-22 16:00,,2013-07-28 08:00,2013-08-14 16:00,,PT_Normal,,,,,R9PW00uhSk+6xak0Uibv6w,xpVpHHnMvEKud81vKiQs4w,,,N,0,0,,,2012-06-19 11:46,2012-06-20 09:59,admin,admin,,,
151,82409,773,10460,851,1,0,N,N,N,CP_Drtn,TT_Task,DT_FixedDUR2,RV_OK,TK_NotStart,4229PFL100,Delivery upto site,,3616,2024,112,0,0,0,112,0,0,0,,,,2013-09-13 08:00,2013-09-26 16:00,,2012-06-20 08:00,2012-07-03 16:00,2012-06-20 08:00,2012-07-03 16:00,2012-06-20 08:00,2012-07-03 16:00,,2013-09-13 08:00,2013-09-26 16:00,,PT_Normal,,,,,ZxMhh8krFkCDAB0HdBM/IA,Tf7vSjkuA0O8+UofbYSmOg,,,N,0,0,,,2012-06-19 11:46,2012-06-20 09:59,admin,admin,,,
152,82410,773,10460,849,1,100,N,N,N,CP_Drtn,TT_Task,DT_FixedDUR2,RV_OK,TK_Complete,4229PFL50,Client approval on bid committee reccomendation,,,,0,0,0,0,16,0,0,0,,2012-02-20 08:00,2012-02-21 16:00,2013-07-28 08:00,2013-07-28 08:00,,2012-06-02 00:00,2012-06-02 00:00,,,2012-02-20 08:00,2012-02-21 16:00,,,,,PT_Normal,,,,,uWBQyXfKc0ST7ZsbvaRqNQ,9aPvfqhTw0CEwcjlUgOBWQ,,,N,0,0,,,2012-06-19 11:46,2012-06-20 10:09,admin,admin,,,
153,82411,773,10460,849,1,0,N,N,N,CP_Drtn,TT_Task,DT_FixedDUR2,RV_OK,TK_NotStart,4229PFL80,L.C issued by Gupco,,2640,2640,40,0,0,0,40,0,0,0,,,,2013-09-22 08:00,2013-09-26 16:00,,2012-06-03 08:00,2012-06-07 16:00,2012-06-03 08:00,2012-06-07 16:00,2012-06-03 08:00,2012-06-07 16:00,,2013-09-22 08:00,2013-09-26 16:00,,PT_Normal,,,,,800aEjOXNUeIUUEvXLrfcg,hju/Z6YvvEKo5Cmbi1YfHw,,,N,0,0,,,2012-06-19 11:46,2012-06-20 09:59,admin,admin,,,
154,82412,773,10460,849,1,100,N,N,N,CP_Drtn,TT_Task,DT_FixedDUR2,RV_OK,TK_Complete,4229PFL40,commercial evaluation & bid committee for Flanges,,,,0,0,0,0,80,0,0,0,,2012-01-25 00:00,2012-02-20 00:00,2013-07-28 08:00,2013-07-28 08:00,,2012-06-02 00:00,2012-06-02 00:00,,,2012-02-05 08:00,2012-02-16 16:00,,,,,PT_Normal,,,,,hKt/nhA6UE67wt6l1/yXGw,cwhykWHlMECb4uDsvooIkQ,,,N,0,0,,,2012-06-19 11:46,2012-06-20 10:09,admin,admin,,,
155,82413,773,10460,849,1,100,N,N,N,CP_Drtn,TT_Task,DT_FixedDUR2,RV_OK,TK_Complete,4229PFL60,F.O.C for Flanges,,,,0,0,0,0,24,0,0,0,,2012-02-22 00:00,2012-02-26 00:00,2013-07-28 08:00,2013-07-28 08:00,,2012-06-02 00:00,2012-06-02 00:00,,,2012-03-04 08:00,2012-03-06 16:00,,,,,PT_Normal,,,,,9GCvyjQcLECabWmWuZJ4ng,Q9JBxixOMkK0UZXQoQ9l3A,,,N,0,0,,,2012-06-19 11:46,2012-06-20 10:09,admin,admin,,,
156,82414,773,10460,849,1,100,N,N,N,CP_Drtn,TT_Task,DT_FixedDUR2,RV_OK,TK_Complete,4229PFL70,P.O for Flanges,,,,0,0,0,0,40,0,0,0,,2012-02-28 00:00,2012-02-28 00:00,2013-07-28 08:00,2013-07-28 08:00,,2012-06-02 00:00,2012-06-02 00:00,,,2012-03-04 08:00,2012-03-08 16:00,,,,,PT_Normal,,,,,RrYK2IQvfkuNAWin5NrPQg,0JXogbR1gUi8jGuDO8H6zw,,,N,0,0,,,2012-06-19 11:46,2012-06-20 10:09,admin,admin,,,
157,82415,773,10460,849,1,100,N,N,N,CP_Drtn,TT_LOE,DT_FixedDUR2,RV_OK,TK_Complete,A1190,T.E.R for flanges,,,,0,0,0,0,160,0,0,0,,2011-12-01 00:00,2012-01-18 16:00,,,,,,,,2011-12-05 08:00,2012-01-01 16:00,,,,,PT_Normal,,,,,XvqZgtyOeE2YBOZ2ASZ8ow,BTZdt/eNwkmTxOsXDtwf+A,,,N,0,0,,,2012-06-19 11:46,2012-06-19 11:46,admin,admin,,,
158,82416,773,10460,849,1,100,N,N,N,CP_Drtn,TT_LOE,DT_FixedDUR2,RV_OK,TK_Complete,A1580,MRP for flanges,,,,0,0,0,0,16,0,0,0,,2012-02-26 00:00,2012-02-27 00:00,,,,,,,,2012-03-07 08:00,2012-03-08 16:00,,,,,PT_Normal,,,,,kwYahFq5U0KXte1pzb3xBw,rb1Bo9MPykqNAoF60pqpMA,,,N,0,0,,,2012-06-19 11:46,2012-06-19 11:46,admin,admin,,,
159,82417,773,10456,850,1,100,N,N,N,CP_Drtn,TT_Task,DT_FixedDrtn,RV_OK,TK_Complete,4229PHB20,Bidding for hot bends,,,,0,0,0,0,200,0,0,0,2011-10-10 00:00,2011-10-10 08:00,2011-10-30 16:00,2013-06-04 08:00,2013-06-04 08:00,,2012-06-02 00:00,2012-06-02 00:00,,,2011-10-10 08:00,2011-11-03 16:00,,,,CS_MSOA,PT_Normal,,,,,0tUnlqH2RkKoQXFOmFlstA,Q7yIZtnDRROY+WyhFyvCjg,,,N,0,0,,,2012-06-19 11:46,2012-06-20 10:09,admin,admin,,,
160,82418,773,10456,849,1,100,N,N,N,CP_Drtn,TT_Task,DT_FixedDrtn,RV_OK,TK_Complete,4229PHB30,Receive revised commercial offers for hot bends,,,,0,0,0,0,40,0,0,0,,2011-12-09 00:00,2011-12-28 00:00,2013-06-04 08:00,2013-06-04 08:00,,2012-06-02 00:00,2012-06-02 00:00,,,2011-12-28 08:00,2012-01-03 16:00,,,,,PT_Normal,,,,,643Fw/5lI0ie1HWj7ZVH2g,lshWR38CR9WKmPPoeHu1kw,,,N,0,0,,,2012-06-19 11:46,2012-06-20 10:09,admin,admin,,,
161,82419,773,10456,849,1,100,N,N,N,CP_Drtn,TT_Task,DT_FixedDUR2,RV_OK,TK_Complete,4229PHB10,Issue RFQ for hot bends,,,,0,0,0,0,16,0,0,0,,2011-10-09 00:00,2011-10-09 00:00,2013-06-04 08:00,2013-06-04 08:00,,2012-06-02 00:00,2012-06-02 00:00,,,2011-08-15 08:00,2011-08-16 16:00,,,,,PT_Normal,,,,,qiW09aEy9kGVjXK5N4NgzQ,RPisVVpZYky8Ac1mUQPczA,,,N,0,0,,,2012-06-19 11:46,2012-06-20 10:09,admin,admin,,,
162,82420,773,10456,850,1,0,N,N,N,CP_Drtn,TT_Task,DT_FixedDUR2,RV_OK,TK_Active,4229PHB100,Fabrication upto R.F.S,,2848,0,624,0,0,0,896,0,0,0,2012-02-09 00:00,2012-04-06 00:00,,2013-06-11 08:00,2013-08-27 16:00,2012-09-05 16:00,2012-06-08 08:00,2012-09-05 16:00,2012-06-08 08:00,2012-09-05 16:00,2012-02-09 08:00,2012-05-30 16:00,,2013-06-11 08:00,2013-08-27 16:00,CS_MSOA,PT_Normal,,,,,PXHMIp7hGEyWakZQbVqqiw,fKTRcaFxTEmgvZfa7vGZeA,,,N,0,0,,,2012-06-19 11:46,2012-06-20 09:59,admin,admin,,,
163,82421,773,10456,851,1,0,N,N,N,CP_Drtn,TT_Task,DT_FixedDUR2,RV_OK,TK_NotStart,4229PHB110,Delivery upto site,,2864,1272,240,0,0,0,240,0,0,0,,,,2013-08-28 08:00,2013-09-26 16:00,,2012-09-06 08:00,2012-10-05 16:00,2012-09-06 08:00,2012-10-05 16:00,2012-09-06 08:00,2012-10-05 16:00,,2013-08-28 08:00,2013-09-26 16:00,,PT_Normal,,,,,L4GC8g0NLUSofCjzinm/fw,JNK95J5kqk2yxXXMkxZF1A,,,N,0,0,,,2012-06-19 11:46,2012-06-20 09:59,admin,admin,,,
164,82422,773,10456,849,1,100,N,N,N,CP_Drtn,TT_Task,DT_FixedDUR2,RV_OK,TK_Complete,4229PHB60,Client approval on bid committee reccomendation,,,,0,0,0,0,16,0,0,0,,2012-01-26 08:00,2012-01-31 00:00,2013-06-04 08:00,2013-06-04 08:00,,2012-06-02 00:00,2012-06-02 00:00,,,2012-01-26 08:00,2012-01-29 16:00,,,,,PT_Normal,,,,,6dAQ7tn3c0STuaAkAyEsBg,Yu1MLBBnZka81lvnYU4ANQ,,,N,0,0,,,2012-06-19 11:46,2012-06-20 10:09,admin,admin,,,
165,82423,773,10456,849,1,0,N,N,N,CP_Drtn,TT_Task,DT_FixedDUR2,RV_OK,TK_NotStart,4229PHB90,L.C issued by Gupco,,2016,0,40,0,0,0,40,0,0,0,,,,2013-06-04 08:00,2013-06-10 16:00,,2012-06-03 08:00,2012-06-07 16:00,2012-06-03 08:00,2012-06-07 16:00,2012-06-03 08:00,2012-06-07 16:00,,2013-06-04 08:00,2013-06-10 16:00,,PT_Normal,,,,,GtNscf2YokOvW0qWT1slGQ,3KZie4yXhUOEEKBN+gqN0g,,,N,0,0,,,2012-06-19 11:46,2012-06-20 09:59,admin,admin,,,
166,82424,773,10456,849,1,100,N,N,N,CP_Drtn,TT_Task,DT_FixedDUR2,RV_OK,TK_Complete,4229PHB50,commercial evaluation & bid committee for hot bends,,,,0,0,0,0,80,0,0,0,,2011-12-29 00:00,2012-01-24 00:00,2013-06-04 08:00,2013-06-04 08:00,,2012-06-02 00:00,2012-06-02 00:00,,,2012-01-01 08:00,2012-01-12 16:00,,,,,PT_Normal,,,,,KdPGKjDSU0ShwvCuV6DCEA,hxCKOj5MQkO6l3IH5Tvwyg,,,N,0,0,,,2012-06-19 11:46,2012-06-20 10:09,admin,admin,,,
167,82425,773,10456,849,1,100,N,N,N,CP_Drtn,TT_Task,DT_FixedDUR2,RV_OK,TK_Complete,4229PHB70,F.O.C for hot bends,,,,0,0,0,0,24,0,0,0,2012-02-01 00:00,2012-04-01 00:00,2012-04-05 00:00,2013-06-04 08:00,2013-06-04 08:00,,2012-06-02 00:00,2012-06-02 00:00,,,2012-02-01 08:00,2012-02-05 16:00,,,,CS_MSOA,PT_Normal,,,,,TWIB2NAyNkW/Yc76VALzVQ,Oh5RJQL9XEi3/FRFqbhptw,,,N,0,0,,,2012-06-19 11:46,2012-06-20 10:09,admin,admin,,,
168,82426,773,10456,849,1,100,N,N,N,CP_Drtn,TT_Task,DT_FixedDUR2,RV_OK,TK_Complete,4229PHB80,P.O for hot bends,,,,0,0,0,0,40,0,0,0,,2012-04-10 00:00,2012-04-18 00:00,2013-06-04 08:00,2013-06-04 08:00,,2012-06-02 00:00,2012-06-02 00:00,,,2012-03-04 08:00,2012-03-08 16:00,,,,,PT_Normal,,,,,eI6hotdzbkSHrLYnlotLow,eUz5eXVrNUuJpSqvEaoIPw,,,N,0,0,,,2012-06-19 11:46,2012-06-20 10:09,admin,admin,,,
169,82427,773,10456,849,1,100,N,N,N,CP_Drtn,TT_LOE,DT_FixedDUR2,RV_OK,TK_Complete,A1200,T.E.R for hot bends,,,,0,0,0,0,207,0,0,0,,2011-10-30 00:00,2011-12-08 00:00,,,,,,,,2011-12-04 08:00,2012-01-08 15:00,,,,,PT_Normal,,,,,75tv5A/+VUOAxXN18WjLOw,3s1TUShvtEibPzUOH/ko9w,,,N,0,0,,,2012-06-19 11:46,2012-06-19 11:46,admin,admin,,,
170,82428,773,10456,849,1,100,N,N,N,CP_Drtn,TT_LOE,DT_FixedDUR2,RV_OK,TK_Complete,A1560,MRP for hot bends,,,,0,0,0,0,48,0,0,0,,2012-02-09 00:00,2012-02-19 00:00,,,,,,,,2012-02-09 08:00,2012-02-16 16:00,,,,,PT_Normal,,,,,SCVfV5fCxEiZ7luV1mHd4Q,ihnfO4Deq028lkj8sUs7ag,,,N,0,0,,,2012-06-19 11:46,2012-06-19 11:46,admin,admin,,,
171,82429,773,10457,849,1,0,N,N,N,CP_Drtn,TT_Task,DT_FixedDUR2,RV_OK,TK_NotStart,4229PFG80,L.C issued by Gupco,,1856,0,40,0,0,0,40,0,0,0,,,,2013-05-14 08:00,2013-05-20 16:00,,2012-06-10 08:00,2012-06-14 16:00,2012-06-10 08:00,2012-06-14 16:00,2012-06-10 08:00,2012-06-14 16:00,,2013-05-14 08:00,2013-05-20 16:00,,PT_Normal,,,,,FEA0aqGRE060Hba3ZREHFQ,hw+Nv+hAEEyyL9o5y71GIw,,,N,0,0,,,2012-06-19 11:46,2012-06-20 09:59,admin,admin,,,
172,82430,773,10457,849,1,100,N,N,N,CP_Drtn,TT_Task,DT_FixedDUR2,RV_OK,TK_Complete,4229PFG10,Issue RFQ for Fire & gas detectors,,,,0,0,0,0,16,0,0,0,2012-01-10 00:00,2012-01-10 08:00,2012-01-10 16:00,2013-05-07 08:00,2013-05-07 08:00,,2012-06-02 00:00,2012-06-02 00:00,,,2012-01-10 08:00,2012-01-11 16:00,,,,CS_MSOA,PT_Normal,,,,,7x1GOGO2wEC9n7eEOUqBpg,I/u8UMyPMEefpVrn15FpHQ,,,N,0,0,,,2012-06-19 11:46,2012-06-20 10:09,admin,admin,,,
173,82431,773,10457,850,1,100,N,N,N,CP_Drtn,TT_Task,DT_FixedDUR2,RV_OK,TK_Complete,4229PFG20,Bidding Fire & gas detectors,,,,0,0,0,0,136,0,0,0,,2012-01-11 00:00,2012-02-26 00:00,2013-05-07 08:00,2013-05-07 08:00,,2012-06-02 00:00,2012-06-02 00:00,,,2012-03-03 08:00,2012-03-19 16:00,,,,,PT_Normal,,,,,Iw8OVr3wd0iPNOXeRwQbpg,ZLRqpsT2cUyA6ivDGm5BOw,,,N,0,0,,,2012-06-19 11:46,2012-06-20 10:09,admin,admin,,,
174,82432,773,10457,849,1,100,N,N,N,CP_Drtn,TT_Task,DT_FixedDUR2,RV_OK,TK_Complete,4229PFG40,commercial evaluation & bid committee for Fire & gas detectors,,,,0,0,0,0,80,0,0,0,,2012-05-10 00:00,2012-05-13 00:00,2013-05-07 08:00,2013-05-07 08:00,,2012-06-02 00:00,2012-06-02 00:00,,,2012-05-06 08:00,2012-05-17 16:00,,,,,PT_Normal,,,,,2E8bKX68d0yDvRp+BB9HAg,SAfIDt5wDEGyLL3ednrvHw,,,N,0,0,,,2012-06-19 11:46,2012-06-20 10:09,admin,admin,,,
175,82433,773,10457,849,1,100,N,N,N,CP_Drtn,TT_Task,DT_FixedDUR2,RV_OK,TK_Complete,4229PFG60,F.O.C for Fire & gas detectors,,,,0,0,0,0,24,0,0,0,,2012-05-17 00:00,2012-05-27 00:00,2013-05-07 08:00,2013-05-07 08:00,,2012-06-02 00:00,2012-06-02 00:00,,,2012-06-10 08:00,2012-06-12 16:00,,,,,PT_Normal,,,,,WjXTTCGjnUKOKxKyK7smrA,huEuXtvgm0aYteDpKcBTIA,,,N,0,0,,,2012-06-19 11:46,2012-06-20 10:09,admin,admin,,,
176,82434,773,10457,849,1,0,N,N,N,CP_Drtn,TT_Task,DT_FixedDUR2,RV_OK,TK_NotStart,4229PFG70,P.O for Fire & gas detectors,,1856,0,40,0,0,0,40,0,0,0,,,,2013-05-07 08:00,2013-05-13 16:00,,2012-06-03 08:00,2012-06-07 16:00,2012-06-03 08:00,2012-06-07 16:00,2012-06-03 08:00,2012-06-07 16:00,,2013-05-07 08:00,2013-05-13 16:00,,PT_Normal,,,,,Ha8nw/qJqkGZh1DOQ9TSwA,xCFTiS4W2U+/+XFLdoJJQA,,,N,0,0,,,2012-06-19 11:46,2012-06-20 09:59,admin,admin,,,
177,82435,773,10457,850,1,0,N,N,N,CP_Drtn,TT_Task,DT_FixedDUR2,RV_OK,TK_NotStart,4229PFG90,Fabrication upto R.F.S,,2624,0,672,0,0,0,672,0,0,0,,,,2013-05-21 08:00,2013-08-12 16:00,,2012-06-15 08:00,2012-09-18 16:00,2012-06-15 08:00,2012-09-18 16:00,2012-06-15 08:00,2012-09-18 16:00,,2013-05-21 08:00,2013-08-12 16:00,,PT_Normal,,,,,iRFT7jpZm0aP8u5JYBlcnQ,lrfM1ie8x0u0Y/bHpNUO2Q,,,N,0,0,,,2012-06-19 11:46,2012-06-20 09:59,admin,admin,,,
178,82436,773,10457,851,1,0,N,N,N,CP_Drtn,TT_Task,DT_FixedDUR2,RV_OK,TK_NotStart,4229PFG100,Delivery upto site,,2640,1048,360,0,0,0,360,0,0,0,,,,2013-08-13 08:00,2013-09-26 16:00,,2012-09-19 08:00,2012-11-02 16:00,2012-09-19 08:00,2012-11-02 16:00,2012-09-19 08:00,2012-11-02 16:00,,2013-08-13 08:00,2013-09-26 16:00,,PT_Normal,,,,,FSyUx6s1fUKsyWPWRCvuZg,AeL1dzhtuEiobz3qEBUY4w,,,N,0,0,,,2012-06-19 11:46,2012-06-20 09:59,admin,admin,,,
179,82437,773,10457,849,1,100,N,N,N,CP_Drtn,TT_Task,DT_FixedDUR2,RV_OK,TK_Complete,4229PFG30,Receive revised commercial offers,,,,0,0,0,0,40,0,0,0,,2012-05-06 00:00,2012-05-10 00:00,2013-05-07 08:00,2013-05-07 08:00,,2012-06-02 00:00,2012-06-02 00:00,,,2012-04-29 08:00,2012-05-03 16:00,,,,,PT_Normal,,,,,KxpJpKM22069iymfNObYVQ,eoWA/lEUcEC05WYtMGhXTA,,,N,0,0,,,2012-06-19 11:46,2012-06-20 10:09,admin,admin,,,
180,82438,773,10457,849,1,100,N,N,N,CP_Drtn,TT_Task,DT_FixedDUR2,RV_OK,TK_Complete,4229PFG50,Client approval on bid committee reccomendation,,,,0,0,0,0,16,0,0,0,,2012-05-14 00:00,2012-05-16 00:00,2013-05-07 08:00,2013-05-07 08:00,,2012-06-02 00:00,2012-06-02 00:00,,,2012-05-20 08:00,2012-05-21 16:00,,,,,PT_Normal,,,,,J6f4SljEUkOkcNPHTURg1A,ixCnxIpqdU6jVkm7+e6ltA,,,N,0,0,,,2012-06-19 11:46,2012-06-20 10:09,admin,admin,,,
181,82439,773,10457,849,1,100,N,N,N,CP_Drtn,TT_LOE,DT_FixedDUR2,RV_OK,TK_Complete,A1060,T.E.R for fire  & Gas detection,,,,0,0,0,0,120,0,0,0,,2012-02-27 00:00,2012-05-03 16:00,,,,,,,,2012-03-20 08:00,2012-04-09 16:00,,,,,PT_Normal,,,,,vdMQCuAAoU6W9755N5hYrQ,YQA1cLVr7kqboY01YoRhgw,,,N,0,0,,,2012-06-19 11:46,2012-06-19 11:46,admin,admin,,,
182,82440,773,10457,849,1,100,N,N,N,CP_Drtn,TT_LOE,DT_FixedDUR2,RV_OK,TK_Complete,A1340,MRP for fire  & Gas detection,,,,0,0,0,0,40,0,0,0,,2012-05-28 00:00,2012-05-29 00:00,,,,,,,,2012-06-03 08:00,2012-06-07 16:00,,,,,PT_Normal,,,,,At5EPIwX40erhwS/G8jgWg,VWzlyCmBNkqx4/itja5tWg,,,N,0,0,,,2012-06-19 11:46,2012-06-19 11:46,admin,admin,,,
183,82441,773,10477,849,1,100,N,N,N,CP_Drtn,TT_Task,DT_FixedDUR2,RV_OK,TK_Complete,4229PFG110,Issue RFQ for Life saving equipment,,,,0,0,0,0,16,0,0,0,2012-01-05 00:00,2012-01-05 08:00,2012-01-05 16:00,2013-09-07 08:00,2013-09-07 08:00,,2012-06-02 00:00,2012-06-02 00:00,,,2012-01-05 08:00,2012-01-08 16:00,,,,CS_MSOA,PT_Normal,,,,,x6u3mIUdckaSRHMpk8MC2w,UKr6qX7UcEegIWyFsGk/9A,,,N,0,0,,,2012-06-19 11:46,2012-06-20 10:09,admin,admin,,,
184,82442,773,10477,850,1,100,N,N,N,CP_Drtn,TT_Task,DT_FixedDUR2,RV_OK,TK_Complete,4229PFG120,Bidding Life saving equipment,,,,0,0,0,0,200,0,0,0,2012-01-09 00:00,2012-01-09 08:00,2012-02-28 00:00,2013-09-07 08:00,2013-09-07 08:00,,2012-06-02 00:00,2012-06-02 00:00,,,2012-01-09 08:00,2012-02-03 16:00,,,,CS_MSOA,PT_Normal,,,,,slwviQ+QpEeVkMDZkS+/cg,z7YUbJQnuUOHHzkwX1ehtw,,,N,0,0,,,2012-06-19 11:46,2012-06-20 10:09,admin,admin,,,
185,82443,773,10477,849,1,100,N,N,N,CP_Drtn,TT_Task,DT_FixedDUR2,RV_OK,TK_Complete,4229PFG130,commercial evaluation & bid committee for Life saving equipment,,,,0,0,0,0,80,0,0,0,,2012-05-23 00:00,2012-05-23 00:00,2013-09-07 08:00,2013-09-07 08:00,,2012-06-02 00:00,2012-06-02 00:00,,,2012-06-10 08:00,2012-06-21 16:00,,,,,PT_Normal,,,,,QMOcG3qmxUiIPmyGyJqpaQ,PJXdORg+x0OWNVOvlFITxQ,,,N,0,0,,,2012-06-19 11:46,2012-06-20 10:09,admin,admin,,,
186,82444,773,10477,849,1,100,N,N,N,CP_Drtn,TT_Task,DT_FixedDUR2,RV_OK,TK_Complete,4229PFG140,F.O.C for Life saving equipment,,,,0,0,0,0,24,0,0,0,,2012-05-23 00:00,2012-05-23 00:00,2013-09-07 08:00,2013-09-07 08:00,,2012-06-02 00:00,2012-06-02 00:00,,,2012-06-26 08:00,2012-06-28 16:00,,,,,PT_Normal,,,,,YO9UVq3vokGx5e5tobiKBA,cuvxyESDG0ibNUht1bd3bA,,,N,0,0,,,2012-06-19 11:46,2012-06-20 10:09,admin,admin,,,
187,82445,773,10477,849,1,100,N,N,N,CP_Drtn,TT_Task,DT_FixedDUR2,RV_OK,TK_Complete,4229PFG150,P.O for Life saving equipment,,,,0,0,0,0,40,0,0,0,,2012-05-23 00:00,2012-05-23 00:00,2013-09-07 08:00,2013-09-07 08:00,,2012-06-02 00:00,2012-06-02 00:00,,,2012-07-01 08:00,2012-07-05 16:00,,,,,PT_Normal,,,,,Bgi02zqxrkuuAb0WFRhsuQ,vV4hpMERQ0OLYMdtF2Z0WA,,,N,0,0,,,2012-06-19 11:46,2012-06-20 10:09,admin,admin,,,
188,82446,773,10477,850,1,100,N,N,N,CP_Drtn,TT_Task,DT_FixedDUR2,RV_OK,TK_Complete,4229PFG160,Fabrication upto R.F.S,,,,0,0,0,0,720,0,0,0,,2012-05-23 00:00,2012-05-23 00:00,2013-09-07 08:00,2013-09-07 08:00,,2012-06-02 00:00,2012-06-02 00:00,,,2012-07-13 08:00,2012-10-22 16:00,,,,,PT_Normal,,,,,9iAzspxDG0qvVbzjsxC7kQ,OoxE0JkxKkCu2N33uSQ1Fw,,,N,0,0,,,2012-06-19 11:46,2012-06-20 10:09,admin,admin,,,
189,82447,773,10477,851,1,100,N,N,N,CP_Drtn,TT_Task,DT_FixedDUR2,RV_OK,TK_Complete,4229PFG170,Delivery upto site,,,,0,0,0,0,360,0,0,0,,2012-05-23 00:00,2012-05-23 00:00,2013-09-26 16:00,2013-09-26 16:00,,2012-06-02 00:00,2012-06-02 00:00,,,2012-10-23 08:00,2012-12-06 16:00,,,,,PT_Normal,,,,,D15MgOcgo0WU59DlH61uRg,5zvjC/YRZUiSNCXmEx7ZuA,,,N,0,0,,,2012-06-19 11:46,2012-06-20 10:09,admin,admin,,,
190,82448,773,10477,849,1,100,N,N,N,CP_Drtn,TT_Task,DT_FixedDUR2,RV_OK,TK_Complete,4229PFG180,Receive revised commercial offers,,,,0,0,0,0,40,0,0,0,,2012-05-23 00:00,2012-05-23 00:00,2013-09-07 08:00,2013-09-07 08:00,,2012-06-02 00:00,2012-06-02 00:00,,,2012-06-03 08:00,2012-06-07 16:00,,,,,PT_Normal,,,,,kwinHI3QPUe3CNA7p1Kazw,pvN2oyXK60mHUF+ERGrRZw,,,N,0,0,,,2012-06-19 11:46,2012-06-20 10:09,admin,admin,,,
191,82449,773,10477,849,1,100,N,N,N,CP_Drtn,TT_Task,DT_FixedDUR2,RV_OK,TK_Complete,4229PFG190,Client approval on bid committee reccomendation,,,,0,0,0,0,16,0,0,0,,2012-05-23 00:00,2012-05-23 00:00,2013-09-07 08:00,2013-09-07 08:00,,2012-06-02 00:00,2012-06-02 00:00,,,2012-06-24 08:00,2012-06-25 16:00,,,,,PT_Normal,,,,,ZLqW63K+4kOKT1rT+tZ0VQ,5M0rSpuH2U+gba7WQIPYBA,,,N,0,0,,,2012-06-19 11:46,2012-06-20 10:09,admin,admin,,,
192,82450,773,10477,849,1,100,N,N,N,CP_Drtn,TT_Task,DT_FixedDUR2,RV_OK,TK_Complete,4229PFG200,L.C issued by Gupco,,,,0,0,0,0,40,0,0,0,,2012-05-23 00:00,2012-05-23 00:00,2013-09-07 08:00,2013-09-07 08:00,,2012-06-02 00:00,2012-06-02 00:00,,,2012-07-08 08:00,2012-07-12 16:00,,,,,PT_Normal,,,,,U9kHLpDMNkmQnNbL/efUJw,aN9tdSzSMESH0+5c2wlgeg,,,N,0,0,,,2012-06-19 11:46,2012-06-20 10:09,admin,admin,,,
193,82451,773,10477,849,1,100,N,N,N,CP_Drtn,TT_LOE,DT_FixedDrtn,RV_OK,TK_Complete,A1070,T.E.R for life saving equipment,,,,0,0,0,0,120,0,0,0,,2012-02-15 00:00,2012-05-15 00:00,,,,,,,,2012-03-04 08:00,2012-03-22 16:00,,,,,PT_Normal,,,,,zZXqig6gyU2eIOf8wcTcDw,Bv3JjrxMAEuiSippF7wBNA,,,N,0,0,,,2012-06-19 11:46,2012-06-19 11:46,admin,admin,,,
194,82452,773,10477,849,1,100,N,N,N,CP_Drtn,TT_LOE,DT_FixedDUR2,RV_OK,TK_Complete,A1350,MRP for life saving equipment,,,,0,0,0,0,0,0,0,0,,2012-05-15 00:00,2012-05-15 00:00,,,,,,,,2012-05-15 08:00,2012-05-15 08:00,,,,,PT_Normal,,,,,BXI8+JTuaEK5BYaZtcufFw,72VeZLjSwkmd6bFuzJS8sg,,,N,0,0,,,2012-06-19 11:46,2012-06-19 11:46,admin,admin,,,
195,82453,773,10478,849,1,100,N,N,N,CP_Drtn,TT_Task,DT_FixedDUR2,RV_OK,TK_Complete,4229PCP30,Receive revised commercial offers,,,,0,0,0,0,40,0,0,0,,2011-12-28 00:00,2012-01-15 00:00,2013-08-06 08:00,2013-08-06 08:00,,2012-06-02 00:00,2012-06-02 00:00,,,2012-01-01 08:00,2012-01-05 16:00,,,,,PT_Normal,,,,,s8GHpC3xa0ywejgq9GpgQg,rsbY6IPE9Ey3ZU3ZNeLLVg,,,N,0,0,,,2012-06-19 11:46,2012-06-20 10:09,admin,admin,,,
196,82454,773,10478,849,1,100,N,N,N,CP_Drtn,TT_Task,DT_FixedDUR2,RV_OK,TK_Complete,4229PCP50,Client approval on bid committee reccommendation,,,,0,0,0,0,16,0,0,0,,2012-02-09 00:00,2012-02-20 00:00,2013-08-06 08:00,2013-08-06 08:00,,2012-06-02 00:00,2012-06-02 00:00,,,2012-03-18 08:00,2012-03-19 16:00,,,,,PT_Normal,,,,,1kh6hLWpEkqOliiNlJw8jQ,iKP7vyvUVkGYjFWGXsYtWw,,,N,0,0,,,2012-06-19 11:46,2012-06-20 10:09,admin,admin,,,
197,82455,773,10478,849,1,0,N,N,N,CP_Drtn,TT_Task,DT_FixedDUR2,RV_OK,TK_NotStart,4229PCP80,L.C issued by Gupco,,2376,0,40,0,0,0,40,0,0,0,,,,2013-08-06 08:00,2013-08-12 16:00,,2012-06-03 08:00,2012-06-07 16:00,2012-06-03 08:00,2012-06-07 16:00,2012-06-03 08:00,2012-06-07 16:00,,2013-08-06 08:00,2013-08-12 16:00,,PT_Normal,,,,,rKjhA5MCLEW0qNIYtzz97A,/xqtBKQ3QEuTmEP+B+vEag,,,N,0,0,,,2012-06-19 11:46,2012-06-20 09:59,admin,admin,,,
198,82456,773,10478,849,1,100,N,N,N,CP_Drtn,TT_Task,DT_FixedDUR2,RV_OK,TK_Complete,4229PCP10,Issue RFQ for Cathodic protection,,,,0,0,0,0,16,0,0,0,,2011-10-26 00:00,2011-10-26 00:00,2013-08-06 08:00,2013-08-06 08:00,,2012-06-02 00:00,2012-06-02 00:00,,,2011-10-30 08:00,2011-10-31 16:00,,,,,PT_Normal,,,,,QmwrTWs4Dk+m8/8rjSA5sw,iEmal3hge0uAij6Wk9qVTQ,,,N,0,0,,,2012-06-19 11:46,2012-06-20 10:09,admin,admin,,,
199,82457,773,10478,850,1,100,N,N,N,CP_Drtn,TT_Task,DT_FixedDUR2,RV_OK,TK_Complete,4229PCP20,Bidding for Cathodic protection,,,,0,0,0,0,200,0,0,0,,2011-10-27 00:00,2011-11-24 00:00,2013-08-06 08:00,2013-08-06 08:00,,2012-06-02 00:00,2012-06-02 00:00,,,2011-11-17 08:00,2011-12-11 16:00,,,,,PT_Normal,,,,,LU4QhUrHTkKwiAa5XcQUcg,x88PzjMZV0GiGu49qJdzgw,,,N,0,0,,,2012-06-19 11:46,2012-06-20 10:09,admin,admin,,,
200,82458,773,10478,849,1,100,N,N,N,CP_Drtn,TT_Task,DT_FixedDUR2,RV_OK,TK_Complete,4229PCP40,Commercial evaluation & bid committee for Cathodic protection,,,,0,0,0,0,80,0,0,0,,2012-01-16 00:00,2012-01-23 00:00,2013-08-06 08:00,2013-08-06 08:00,,2012-06-02 00:00,2012-06-02 00:00,,,2012-01-09 08:00,2012-01-22 16:00,,,,,PT_Normal,,,,,OJj+GTYRmkWlgKf0Ujqw+A,ZFrWAGC2TE+1R7WsidTdYQ,,,N,0,0,,,2012-06-19 11:46,2012-06-20 10:09,admin,admin,,,
201,82459,773,10478,849,1,100,N,N,N,CP_Drtn,TT_Task,DT_FixedDUR2,RV_OK,TK_Complete,4229PCP60,F.O.C for Cathodic protection,,,,0,0,0,0,24,0,0,0,,2012-02-21 00:00,2012-02-26 00:00,2013-08-06 08:00,2013-08-06 08:00,,2012-06-02 00:00,2012-06-02 00:00,,,2012-03-20 08:00,2012-03-22 16:00,,,,,PT_Normal,,,,,wiNcIgj+JEC1VwWyTSrp4w,plWp9w3MSEaEBD3XTKD6uw,,,N,0,0,,,2012-06-19 11:46,2012-06-20 10:09,admin,admin,,,
202,82460,773,10478,849,1,100,N,N,N,CP_Drtn,TT_Task,DT_FixedDUR2,RV_OK,TK_Complete,4229PCP70,P.O for Cathodic protection,,,,0,0,0,0,40,0,0,0,,2012-02-29 00:00,2012-03-01 00:00,2013-08-06 08:00,2013-08-06 08:00,,2012-06-02 00:00,2012-06-02 00:00,,,2012-03-04 08:00,2012-03-08 16:00,,,,,PT_Normal,,,,,KesA1dz6sU626rdMEX4Elw,XKuDtF9Y5kyIjE3UFTFzuw,,,N,0,0,,,2012-06-19 11:46,2012-06-20 10:09,admin,admin,,,
203,82461,773,10478,850,1,100,N,N,N,CP_Drtn,TT_Task,DT_FixedDUR2,RV_OK,TK_Complete,4229PCP90,Fabrication upto R.F.S,,,,0,0,0,0,560,0,0,0,,2012-02-26 00:00,2012-05-28 00:00,2013-08-13 08:00,2013-08-13 08:00,,2012-06-07 16:00,2012-06-07 16:00,,,2012-03-14 08:00,2012-05-22 16:00,,,,,PT_Normal,,,,,cOVxMEwOXkue/QncJyikag,erBLKNm/ZUeEO9HJpLgTjg,,,N,0,0,,,2012-06-19 11:46,2012-06-20 10:09,admin,admin,,,
204,82462,773,10478,851,1,0,N,N,N,CP_Drtn,TT_Task,DT_FixedDUR2,RV_OK,TK_Active,4229PCP100,Delivery upto site,,3464,1872,360,0,0,0,360,0,0,0,,2012-05-29 00:00,,2013-08-13 08:00,2013-09-26 16:00,,2012-06-08 08:00,2012-07-22 16:00,2012-06-08 08:00,2012-07-22 16:00,2012-06-08 08:00,2012-07-22 16:00,,2013-08-13 08:00,2013-09-26 16:00,,PT_Normal,,,,,ywORtFp82kGyKAbpkcglRg,PvZx3hz21kCQaaYCBE4F/Q,,,N,0,0,,,2012-06-19 11:46,2012-06-20 09:59,admin,admin,,,
205,82463,773,10478,849,1,100,N,N,N,CP_Drtn,TT_LOE,DT_FixedDrtn,RV_OK,TK_Complete,A1120,T.E.R for cathodic protection,,,,0,0,0,0,151,0,0,0,,2011-11-24 00:00,2011-12-27 00:00,,,,,,,,2011-12-04 08:00,2011-12-28 15:00,,,,,PT_Normal,,,,,nN3q/U7qE0KRN6AUIb0ngA,3KXa9cqK30u8RebBmL/QDw,,,N,0,0,,,2012-06-19 11:46,2012-06-19 11:46,admin,admin,,,
206,82464,773,10478,849,1,100,N,N,N,CP_Drtn,TT_LOE,DT_FixedDUR2,RV_OK,TK_Complete,A1390,MRP for cathodic protection,,,,0,0,0,0,40,0,0,0,,2012-02-27 00:00,2012-02-28 00:00,,,,,,,,2012-03-04 08:00,2012-03-08 16:00,,,,,PT_Normal,,,,,N8LlEpmrT0265rLzNRNrhA,i8D5fIZvpke+0Tb8UUxLPw,,,N,0,0,,,2012-06-19 11:46,2012-06-19 11:46,admin,admin,,,
207,82465,773,10479,849,1,100,N,N,N,CP_Drtn,TT_Task,DT_FixedDUR2,RV_OK,TK_Complete,4229PFF110,Re-issue RFQ for Fire Fighting,,,,0,0,0,0,8,0,0,0,,2012-03-01 00:00,2012-03-03 00:00,2013-03-07 08:00,2013-03-07 08:00,,2012-06-02 00:00,2012-06-02 00:00,,,2012-04-29 08:00,2012-04-29 16:00,,,,,PT_Normal,,,,,VKr2Xl3iKUaYMwCvE29buA,,,,N,0,0,,,2012-06-19 11:46,2012-06-20 10:09,admin,admin,,,
208,82466,773,10479,849,1,0,N,N,N,CP_Drtn,TT_Task,DT_FixedDUR2,RV_OK,TK_Active,4229PFF30,Receive revised commercial offers,,1512,0,24,0,0,0,40,0,0,0,,2012-05-30 00:00,,2013-03-07 08:00,2013-03-11 16:00,,2012-06-03 08:00,2012-06-05 16:00,2012-06-03 08:00,2012-06-05 16:00,2012-06-03 08:00,2012-06-07 16:00,,2013-03-07 08:00,2013-03-11 16:00,,PT_Normal,,,,,QSol6Q+A20K28Dals3585w,AYPNiDXaKE6RLh7mqlxUcQ,,,N,0,0,,,2012-06-19 11:46,2012-06-20 09:59,admin,admin,,,
209,82467,773,10479,849,1,0,N,N,N,CP_Drtn,TT_Task,DT_FixedDUR2,RV_OK,TK_NotStart,4229PFF50,Client approval on bid committee reccomendation,,1512,0,16,0,0,0,16,0,0,0,,,,2013-03-26 08:00,2013-03-27 16:00,,2012-06-20 08:00,2012-06-21 16:00,2012-06-20 08:00,2012-06-21 16:00,2012-06-20 08:00,2012-06-21 16:00,,2013-03-26 08:00,2013-03-27 16:00,,PT_Normal,,,,,91tNmBZrVUmZ+qAE0BljLw,okMlSxQPlUu8ymqN/KtiYQ,,,N,0,0,,,2012-06-19 11:46,2012-06-20 09:59,admin,admin,,,
210,82468,773,10479,849,1,0,N,N,N,CP_Drtn,TT_Task,DT_FixedDUR2,RV_OK,TK_NotStart,4229PFF80,L.C issued by Gupco,,1512,0,40,0,0,0,40,0,0,0,,,,2013-04-16 08:00,2013-04-22 16:00,,2012-07-11 08:00,2012-07-17 16:00,2012-07-11 08:00,2012-07-17 16:00,2012-07-11 08:00,2012-07-17 16:00,,2013-04-16 08:00,2013-04-22 16:00,,PT_Normal,,,,,taUR8ytZeEiKrI+RaLzLUQ,8XeEO//CcEKYVr5WUWm1nw,,,N,0,0,,,2012-06-19 11:46,2012-06-20 09:59,admin,admin,,,
211,82469,773,10479,849,1,100,N,N,N,CP_Drtn,TT_Task,DT_FixedDUR2,RV_OK,TK_Complete,4229PFF10,Issue RFQ for Fire fighting,,,,0,0,0,0,16,0,0,0,2012-01-09 00:00,2012-01-09 08:00,2012-01-10 16:00,2013-03-07 08:00,2013-03-07 08:00,,2012-06-02 00:00,2012-06-02 00:00,,,2012-01-09 08:00,2012-01-10 16:00,,,,CS_MSOA,PT_Normal,,,,,+/72KfxSIES0cNGNkanGxA,JI5SVA605USWDWBKpsEVTw,,,N,0,0,,,2012-06-19 11:46,2012-06-20 10:09,admin,admin,,,
212,82470,773,10479,851,1,0,N,N,N,CP_Drtn,TT_Task,DT_FixedDUR2,RV_OK,TK_NotStart,4229PFF100,Delivery upto site,,2152,560,360,0,0,0,360,0,0,0,,,,2013-08-13 08:00,2013-09-26 16:00,,2012-11-19 08:00,2013-01-01 00:00,2012-11-19 08:00,2013-01-01 00:00,2012-11-19 08:00,2013-01-01 00:00,,2013-08-13 08:00,2013-09-26 16:00,,PT_Normal,,,,,onCl4k2Jk0S1f/qomL/4aw,WLZv2gJavUGvjngHCiSujQ,,,N,0,0,,,2012-06-19 11:46,2012-06-20 09:59,admin,admin,,,
213,82471,773,10479,850,1,100,N,N,N,CP_Drtn,TT_Task,DT_FixedDUR2,RV_OK,TK_Complete,4229PFF20,Bidding for Fire fighting,,,,0,0,0,0,160,0,0,0,2012-01-11 00:00,2012-03-04 00:00,2012-04-03 00:00,2013-03-07 08:00,2013-03-07 08:00,,2012-06-02 00:00,2012-06-02 00:00,,,2012-01-11 08:00,2012-01-31 16:00,,,,CS_MSOA,PT_Normal,,,,,Z+WT5oqUXUmGA9nS3ebo4g,9MnOz/vVdkC9ctNWH2r8qg,,,N,0,0,,,2012-06-19 11:46,2012-06-20 10:09,admin,admin,,,
214,82472,773,10479,849,1,0,N,N,N,CP_Drtn,TT_Task,DT_FixedDUR2,RV_OK,TK_NotStart,4229PFF40,commercial evaluation & bid committee for Fire fighting,,1512,0,80,0,0,0,80,0,0,0,,,,2013-03-12 08:00,2013-03-25 16:00,,2012-06-06 08:00,2012-06-19 16:00,2012-06-06 08:00,2012-06-19 16:00,2012-06-06 08:00,2012-06-19 16:00,,2013-03-12 08:00,2013-03-25 16:00,,PT_Normal,,,,,7MwER8zzhU2SXcJ3z61KFw,HB71H4gGzEi8k5nywomlQQ,,,N,0,0,,,2012-06-19 11:46,2012-06-20 09:59,admin,admin,,,
215,82473,773,10479,849,1,0,N,N,N,CP_Drtn,TT_Task,DT_FixedDUR2,RV_OK,TK_NotStart,4229PFF60,F.O.C for Fire fighting,,1512,0,24,0,0,0,24,0,0,0,,,,2013-03-28 08:00,2013-04-01 16:00,,2012-06-24 08:00,2012-06-26 16:00,2012-06-24 08:00,2012-06-26 16:00,2012-06-24 08:00,2012-06-26 16:00,,2013-03-28 08:00,2013-04-01 16:00,,PT_Normal,,,,,OBkZo63ogEqdnaZugIzjqQ,FKG5q0XubUmv7n25cBnM+A,,,N,0,0,,,2012-06-19 11:46,2012-06-20 09:59,admin,admin,,,
216,82474,773,10479,849,1,0,N,N,N,CP_Drtn,TT_Task,DT_FixedDUR2,RV_OK,TK_NotStart,4229PFF70,P.O for Fire fighting,,1512,0,40,0,0,0,40,0,0,0,,,,2013-04-09 08:00,2013-04-15 16:00,,2012-07-04 08:00,2012-07-10 16:00,2012-07-04 08:00,2012-07-10 16:00,2012-07-04 08:00,2012-07-10 16:00,,2013-04-09 08:00,2013-04-15 16:00,,PT_Normal,,,,,kgM4M51Ui0CpQGKBN5DknQ,3CKBmFUDZUiNIm/ll8DEwg,,,N,0,0,,,2012-06-19 11:46,2012-06-20 09:59,admin,admin,,,
217,82475,773,10479,850,1,0,N,N,N,CP_Drtn,TT_Task,DT_FixedDUR2,RV_OK,TK_NotStart,4229PFF90,Fabrication upto R.F.S,,2136,0,896,0,0,0,896,0,0,0,,,,2013-04-23 08:00,2013-08-12 16:00,,2012-07-18 08:00,2012-11-18 16:00,2012-07-18 08:00,2012-11-18 16:00,2012-07-18 08:00,2012-11-18 16:00,,2013-04-23 08:00,2013-08-12 16:00,,PT_Normal,,,,,xnlHouXN6EqGKoO9pJoDBg,CqIGa1jDK0i2r+exE2hpBg,,,N,0,0,,,2012-06-19 11:46,2012-06-20 09:59,admin,admin,,,
218,82476,773,10479,849,1,100,N,N,N,CP_Drtn,TT_LOE,DT_FixedDUR2,RV_OK,TK_Complete,A1050,T.E.R for fire fighting system,,,,0,0,0,0,168,0,0,0,,2012-04-03 08:00,2012-05-29 00:00,,,,,,,,2012-04-03 08:00,2012-05-01 16:00,,,,,PT_Normal,,,,,lzXABoMu7kaRElAnjcUq9Q,hYdf5c4+n0uSjfwTIJSUbQ,,,N,0,0,,,2012-06-19 11:46,2012-06-19 11:46,admin,admin,,,
219,82477,773,10479,849,1,0,N,N,N,CP_Drtn,TT_LOE,DT_FixedDUR2,RV_OK,TK_NotStart,A1330,MRP for fire fighting system,,1512,0,40,0,0,0,40,0,0,0,,,,2013-04-02 08:00,2013-04-08 16:00,,2012-06-27 08:00,2012-07-03 16:00,2012-06-27 08:00,2012-07-03 16:00,2012-06-27 08:00,2012-07-03 16:00,,2013-04-02 08:00,2013-04-08 16:00,,PT_Normal,,,,,FtvCvW030Eyi3HiRVhF8gA,op1JmMtlF0SUYLP8Ya3S/A,,,N,0,0,,,2012-06-19 11:46,2012-06-20 10:09,admin,admin,,,
220,82478,773,10480,849,1,100,N,N,N,CP_Drtn,TT_Task,DT_FixedDUR2,RV_OK,TK_Complete,4229PTR30,Receive revised commercial offers,,,,0,0,0,0,40,0,0,0,,2011-12-05 00:00,2011-12-11 00:00,2012-12-30 08:00,2012-12-30 08:00,,2012-06-02 00:00,2012-06-02 00:00,,,2012-01-01 08:00,2012-01-05 16:00,,,,,PT_Normal,,,,,tyrma95snkeWqSDi5Vi8jg,AYPNiDXaKE6RLh7mqlxUcQ,,,N,0,0,,,2012-06-19 11:46,2012-06-20 10:09,admin,admin,,,
221,82479,773,10480,849,1,100,N,N,N,CP_Drtn,TT_Task,DT_FixedDUR2,RV_OK,TK_Complete,4229PTR50,Client approval on bid committee reccomendation,,,,0,0,0,0,16,0,0,0,,2011-12-25 00:00,2012-01-31 00:00,2012-12-30 08:00,2012-12-30 08:00,,2012-06-02 00:00,2012-06-02 00:00,,,2012-01-22 08:00,2012-01-23 16:00,,,,,PT_Normal,,,,,kVKCKSyrYkWviOSWHtVAiQ,okMlSxQPlUu8ymqN/KtiYQ,,,N,0,0,,,2012-06-19 11:46,2012-06-20 10:09,admin,admin,,,
222,82480,773,10480,849,1,0,N,N,N,CP_Drtn,TT_Task,DT_FixedDUR2,RV_OK,TK_Active,4229PTR80,L.C issued by Gupco,,1120,0,8,0,0,0,40,0,0,0,,2012-02-22 00:00,,2012-12-30 08:00,2012-12-30 16:00,,2012-06-03 08:00,2012-06-03 16:00,2012-06-03 08:00,2012-06-03 16:00,2012-03-04 08:00,2012-03-08 16:00,,2012-12-30 08:00,2012-12-30 16:00,,PT_Normal,,,,,QjM8CPzOCE+b2srhGOhQBw,8XeEO//CcEKYVr5WUWm1nw,,,N,0,0,,,2012-06-19 11:46,2012-06-20 09:59,admin,admin,,,
223,82481,773,10480,849,1,100,N,N,N,CP_Drtn,TT_Task,DT_FixedDUR2,RV_OK,TK_Complete,4229PTR10,Issue RFQ for L&R traps,,,,0,0,0,0,16,0,0,0,,2011-08-23 08:00,2011-08-25 00:00,2012-12-30 08:00,2012-12-30 08:00,,2012-06-02 00:00,2012-06-02 00:00,,,2011-08-23 08:00,2011-08-24 16:00,,,,,PT_Normal,,,,,rdM5PgKdZEyMaXBVnkf6vw,32IZnXTP7UyV6zFdZX+PkQ,,,N,0,0,,,2012-06-19 11:46,2012-06-20 10:09,admin,admin,,,
224,82482,773,10480,850,1,100,N,N,N,CP_Drtn,TT_Task,DT_FixedDUR2,RV_OK,TK_Complete,4229PTR20,Bidding for L&R traps,,,,0,0,0,0,224,0,0,0,,2011-08-26 00:00,2011-09-19 00:00,2012-12-30 08:00,2012-12-30 08:00,,2012-06-02 00:00,2012-06-02 00:00,,,2011-08-25 08:00,2011-09-21 16:00,,,,,PT_Normal,,,,,sq/LSnrXRkeVMNT1BORHNA,kJ0A+WVz+Eey0qSlfjfY1w,,,N,0,0,,,2012-06-19 11:46,2012-06-20 10:09,admin,admin,,,
225,82483,773,10480,849,1,100,N,N,N,CP_Drtn,TT_Task,DT_FixedDUR2,RV_OK,TK_Complete,4229PTR40,commercial evaluation & bid committee for L&R traps,,,,0,0,0,0,80,0,0,0,,2011-12-12 00:00,2011-12-22 00:00,2012-12-30 08:00,2012-12-30 08:00,,2012-06-02 00:00,2012-06-02 00:00,,,2012-01-08 08:00,2012-01-19 16:00,,,,,PT_Normal,,,,,2q2al98LMkSW6/FhgHngMw,4tj9gre8xECDJFXRMB/KMQ,,,N,0,0,,,2012-06-19 11:46,2012-06-20 10:09,admin,admin,,,
226,82484,773,10480,849,1,100,N,N,N,CP_Drtn,TT_Task,DT_FixedDUR2,RV_OK,TK_Complete,4229PTR60,F.O.C for L&R traps,,,,0,0,0,0,24,0,0,0,,2012-02-01 00:00,2012-02-08 00:00,2012-12-30 08:00,2012-12-30 08:00,,2012-06-02 00:00,2012-06-02 00:00,,,2012-03-06 08:00,2012-03-08 16:00,,,,,PT_Normal,,,,,MM/mretZbUWZ6PGAe4jA7w,mY9xW1A1UUOQ/dWkE7HdGw,,,N,0,0,,,2012-06-19 11:46,2012-06-20 10:09,admin,admin,,,
227,82485,773,10480,849,1,100,N,N,N,CP_Drtn,TT_Task,DT_FixedDUR2,RV_OK,TK_Complete,4229PTR70,P.O for L&R traps,,,,0,0,0,0,16,0,0,0,,2012-02-20 00:00,2012-02-21 00:00,2012-12-30 08:00,2012-12-30 08:00,,2012-06-02 00:00,2012-06-02 00:00,,,2012-03-04 08:00,2012-03-05 16:00,,,,,PT_Normal,,,,,L4v1PQ/MAU+QzJ2yBabOUw,AGbFlgdHtUaygmOdjbChJA,,,N,0,0,,,2012-06-19 11:46,2012-06-20 10:09,admin,admin,,,
228,82486,773,10480,850,1,0,N,N,N,CP_Drtn,TT_Task,DT_FixedDUR2,RV_OK,TK_Active,4229PTR90,Fabrication upto R.F.S,,1584,0,984,0,0,0,1288,0,0,0,,2012-02-22 00:00,,2012-12-31 08:00,2013-05-02 16:00,,2012-06-04 08:00,2012-10-16 16:00,2012-06-04 08:00,2012-10-16 16:00,2012-03-05 08:00,2012-08-12 16:00,,2012-12-31 08:00,2013-05-02 16:00,,PT_Normal,,,,,FqUs1JLVf0SSpxngN7yVfQ,GVaPG4kl40KJCTAmiH7BtQ,,,N,0,0,,,2012-06-19 11:46,2012-06-20 09:59,admin,admin,,,
229,82487,773,10480,851,1,0,N,N,N,CP_Drtn,TT_Task,DT_FixedDUR2,RV_OK,TK_NotStart,4229PTR100,Delivery upto site,,2720,1128,56,0,0,0,56,0,0,0,,,,2013-09-20 08:00,2013-09-26 16:00,,2012-10-17 08:00,2012-10-23 16:00,2012-10-17 08:00,2012-10-23 16:00,2012-10-17 08:00,2012-10-23 16:00,,2013-09-20 08:00,2013-09-26 16:00,,PT_Normal,,,,,m7tNbToehEeW3fNxtGmNkw,5ZdU8uO76kyqCb4bfEYLKw,,,N,0,0,,,2012-06-19 11:46,2012-06-20 09:59,admin,admin,,,
230,82488,773,10480,849,1,100,N,N,N,CP_Drtn,TT_LOE,DT_FixedDUR2,RV_OK,TK_Complete,A1080,T.E.R for L&R,,,,0,0,0,0,120,0,0,0,,2011-09-22 08:00,2011-12-04 08:00,,,,,,,,2011-09-22 08:00,2011-10-13 16:00,,,,,PT_Normal,,,,,PDJpQqMhoEO/PA4W0r+3tw,XRyO7VMwTE+DF2zubFzqvw,,,N,0,0,,,2012-06-19 11:46,2012-06-19 11:46,admin,admin,,,
231,82489,773,10480,849,1,100,N,N,N,CP_Drtn,TT_LOE,DT_FixedDUR2,RV_OK,TK_Complete,A1360,MRP for L&R,,,,0,0,0,0,40,0,0,0,,2012-02-09 00:00,2012-02-19 00:00,,,,,,,,2012-03-04 08:00,2012-03-08 16:00,,,,,PT_Normal,,,,,eAIYPVlmxUaRZjyZhwuXmQ,A5W8mGd6BE2UO+cKbloHZw,,,N,0,0,,,2012-06-19 11:46,2012-06-19 11:46,admin,admin,,,
232,82490,773,10481,849,1,0,N,N,N,CP_Drtn,TT_Task,DT_FixedDUR2,RV_OK,TK_NotStart,4229PRS40,commercial evaluation & bid committee for Radar system,,1392,0,80,0,0,0,80,0,0,0,,,,2013-04-23 08:00,2013-05-06 16:00,,2012-08-08 08:00,2012-08-28 16:00,2012-08-08 08:00,2012-08-28 16:00,2012-08-08 08:00,2012-08-28 16:00,,2013-04-23 08:00,2013-05-06 16:00,,PT_Normal,,,,,cbzg1hgHYkyO0tUeq2dC5w,MPqcdsw9S6W2dXlu07dRzw,,,N,0,0,,,2012-06-19 11:46,2012-06-20 09:59,admin,admin,,,
233,82491,773,10481,849,1,0,N,N,N,CP_Drtn,TT_Task,DT_FixedDUR2,RV_OK,TK_NotStart,4229PRS60,F.O.C for  Radar system,,1392,0,24,0,0,0,24,0,0,0,,,,2013-05-09 08:00,2013-05-13 16:00,,2012-09-02 08:00,2012-09-04 16:00,2012-09-02 08:00,2012-09-04 16:00,2012-09-02 08:00,2012-09-04 16:00,,2013-05-09 08:00,2013-05-13 16:00,,PT_Normal,,,,,g1kCLvbRoUCyUJNOdNHeNQ,8bhvNgcsRzunguxdp4ysfg,,,N,0,0,,,2012-06-19 11:46,2012-06-20 09:59,admin,admin,,,
234,82492,773,10481,849,1,0,N,N,N,CP_Drtn,TT_Task,DT_FixedDUR2,RV_OK,TK_NotStart,4229PRS70,P.O for Radar system,,1392,0,16,0,0,0,16,0,0,0,,,,2013-05-21 08:00,2013-05-22 16:00,,2012-09-12 08:00,2012-09-13 16:00,2012-09-12 08:00,2012-09-13 16:00,2012-09-12 08:00,2012-09-13 16:00,,2013-05-21 08:00,2013-05-22 16:00,,PT_Normal,,,,,57GweIHB/0W+n0BF/xz7zQ,iGsAl0jiSTe9wP87ple5+A,,,N,0,0,,,2012-06-19 11:46,2012-06-20 09:59,admin,admin,,,
235,82493,773,10481,850,1,0,N,N,N,CP_Drtn,TT_Task,DT_FixedDUR2,RV_OK,TK_NotStart,4229PRS90,Fabrication upto R.F.S,,2008,0,720,0,0,0,720,0,0,0,,,,2013-05-30 08:00,2013-08-27 16:00,,2012-09-21 08:00,2012-12-19 16:00,2012-09-21 08:00,2012-12-19 16:00,2012-09-21 08:00,2012-12-19 16:00,,2013-05-30 08:00,2013-08-27 16:00,,PT_Normal,,,,,MfT1hjEwPEyon4ELZZ2Abg,puuO8vGhRUyOmMA5nP1O+g,,,N,0,0,,,2012-06-19 11:46,2012-06-20 09:59,admin,admin,,,
236,82494,773,10481,849,1,0,N,N,N,CP_Drtn,TT_LOE,DT_FixedDUR2,RV_OK,TK_NotStart,A1180,T.E.R  for Radar System,,2176,0,184,0,0,0,184,0,0,0,,,,2012-07-03 08:00,2013-09-02 16:00,,2012-07-03 08:00,2012-08-02 16:00,2012-07-03 08:00,2012-08-02 16:00,2012-07-03 08:00,2012-08-02 16:00,,2012-07-03 08:00,2013-09-02 16:00,,PT_Normal,,,,,5pGNUKOsk0uLyac59BABrA,wSpvN7TbW0C3y0sKPLokBw,,,N,0,0,,,2012-06-19 11:46,2012-06-20 10:09,admin,admin,,,
237,82495,773,10481,849,1,0,N,N,N,CP_Drtn,TT_LOE,DT_FixedDUR2,RV_OK,TK_NotStart,A1530,MRP for Radar System,,1392,0,40,0,0,0,40,0,0,0,,,,2013-05-14 08:00,2013-05-20 16:00,,2012-09-05 08:00,2012-09-11 16:00,2012-09-05 08:00,2012-09-11 16:00,2012-09-05 08:00,2012-09-11 16:00,,2013-05-14 08:00,2013-05-20 16:00,,PT_Normal,,,,,g75vv4eI60KSSiVnn2jpCg,budr3CG4i0GaHCpjUSXmxg,,,N,0,0,,,2012-06-19 11:46,2012-06-20 10:09,admin,admin,,,
238,82496,773,10481,851,1,0,N,N,N,CP_Drtn,TT_Task,DT_FixedDUR2,RV_OK,TK_NotStart,4229PRS100,Delivery upto site,,2024,0,240,0,0,0,240,0,0,0,,,,2013-08-28 08:00,2013-09-26 16:00,,2012-12-20 08:00,2013-01-16 16:00,2012-12-20 08:00,2013-01-16 16:00,2012-12-20 08:00,2013-01-16 16:00,,2013-08-28 08:00,2013-09-26 16:00,,PT_Normal,,,,,6qgAAbVE3EaoNHsXN8G7QQ,g8Q0jtgbT/+uddB0tjRcbQ,,,N,0,0,,,2012-06-19 11:46,2012-06-20 09:59,admin,admin,,,
239,82497,773,10481,849,1,0,N,N,N,CP_Drtn,TT_Task,DT_FixedDUR2,RV_OK,TK_NotStart,4229PRS30,Receive revised commercial offers,,1392,0,24,0,0,0,24,0,0,0,,,,2013-04-18 08:00,2013-04-22 16:00,,2012-08-05 08:00,2012-08-07 16:00,2012-08-05 08:00,2012-08-07 16:00,2012-08-05 08:00,2012-08-07 16:00,,2013-04-18 08:00,2013-04-22 16:00,,PT_Normal,,,,,Y37eWJR93U+Ktc9oORQ3XA,B+Zuduv2SsyLxT8xwR8UPQ,,,N,0,0,,,2012-06-19 11:46,2012-06-20 09:59,admin,admin,,,
240,82498,773,10481,849,1,0,N,N,N,CP_Drtn,TT_Task,DT_FixedDUR2,RV_OK,TK_NotStart,4229PRS50,Client approval on bid committee reccomendation,,1392,0,16,0,0,0,16,0,0,0,,,,2013-05-07 08:00,2013-05-08 16:00,,2012-08-29 08:00,2012-08-30 16:00,2012-08-29 08:00,2012-08-30 16:00,2012-08-29 08:00,2012-08-30 16:00,,2013-05-07 08:00,2013-05-08 16:00,,PT_Normal,,,,,nPlUYh7FQUSYoYTj6Dm+XQ,zT/22/TBQsCQFBhN3YnEyg,,,N,0,0,,,2012-06-19 11:46,2012-06-20 09:59,admin,admin,,,
241,82499,773,10481,849,1,0,N,N,N,CP_Drtn,TT_Task,DT_FixedDUR2,RV_OK,TK_NotStart,4229PRS80,L.C issued by Gupco,,1392,0,40,0,0,0,40,0,0,0,,,,2013-05-23 08:00,2013-05-29 16:00,,2012-09-16 08:00,2012-09-20 16:00,2012-09-16 08:00,2012-09-20 16:00,2012-09-16 08:00,2012-09-20 16:00,,2013-05-23 08:00,2013-05-29 16:00,,PT_Normal,,,,,RDf0HTm0FUKgOvi/GFMv5g,cOseZnNCQ9uilVGDGxsV7A,,,N,0,0,,,2012-06-19 11:46,2012-06-20 09:59,admin,admin,,,
242,82500,773,10481,849,1,100,N,N,N,CP_Drtn,TT_Task,DT_FixedDUR2,RV_OK,TK_Complete,4229PRS10,Issue RFQ for Radar system,,,,0,0,0,0,16,0,0,0,,2011-11-30 00:00,2011-11-30 00:00,2012-06-04 08:00,2012-06-04 08:00,,2012-06-02 00:00,2012-06-02 00:00,,,2011-12-04 08:00,2011-12-05 16:00,,,,,PT_Normal,,,,,oNzISN0HmUSnW9okf/SXQw,yASt0/SqSpucA1CBFijq/Q,,,N,0,0,,,2012-06-19 11:46,2012-06-20 10:09,admin,admin,,,
243,82501,773,10481,850,1,0,N,N,N,CP_Drtn,TT_Task,DT_FixedDUR2,RV_OK,TK_Active,4229PRS20,Bidding for Radar system,,16,0,232,0,0,0,120,0,0,0,,2011-12-01 00:00,,2012-06-04 08:00,2012-07-02 16:00,2012-06-30 16:00,2012-06-02 08:00,2012-06-30 16:00,2012-06-02 08:00,2012-06-30 16:00,2011-12-06 08:00,2011-12-20 16:00,,2012-06-04 08:00,2012-07-02 16:00,,PT_Normal,,,,,AZo/eH6rZ0i2DQsOrQsUjA,rv6U+xZER1a1xRmaRFaz6Q,,,N,0,0,,,2012-06-19 11:46,2012-06-19 11:46,admin,admin,,,
244,82502,773,10482,850,1,0,N,N,N,CP_Drtn,TT_Task,DT_FixedDUR2,RV_OK,TK_Active,4229PMP90,Fabrication upto R.F.S,,1600,0,1056,0,0,0,1888,0,0,0,,2012-02-22 00:00,,2012-12-31 08:00,2013-05-11 16:00,2012-10-23 16:00,2012-06-02 08:00,2012-10-23 16:00,2012-06-02 08:00,2012-10-23 16:00,2012-03-09 08:00,2012-11-11 16:00,,2012-12-31 08:00,2013-05-11 16:00,,PT_Normal,,,,,9PbxWyCjRE2fTys471ow2A,7UQ9XmTabEqxyA7/76n9MA,,,N,0,0,,,2012-06-19 11:46,2012-06-20 09:59,admin,admin,,,
245,82503,773,10482,850,1,0,N,N,N,CP_Drtn,TT_Task,DT_FixedDUR2,RV_OK,TK_NotStart,4229PMP100,Delivery upto site,,2464,440,240,0,0,0,240,0,0,0,,,,2013-08-28 08:00,2013-09-26 16:00,,2012-10-24 08:00,2012-11-22 16:00,2012-10-24 08:00,2012-11-22 16:00,2012-10-24 08:00,2012-11-22 16:00,,2013-08-28 08:00,2013-09-26 16:00,,PT_Normal,,,,,E6JzH0KrWEiKKXuTGGrISg,Ed1rw6pVGkqfXjRfFT7JpQ,,,N,0,0,,,2012-06-19 11:46,2012-06-20 09:59,admin,admin,,,
246,82504,773,10482,849,1,100,N,N,N,CP_Drtn,TT_Task,DT_FixedDUR2,RV_OK,TK_Complete,4229PMP30,Receive revised commercial offers,,,,0,0,0,0,32,0,0,0,,2011-12-22 08:00,2011-12-25 00:00,2012-12-31 08:00,2012-12-31 08:00,,2012-06-02 00:00,2012-06-02 00:00,,,2011-12-22 08:00,2011-12-27 16:00,,,,,PT_Normal,,,,,P0q1TMVMXECZOwbjTrS/gQ,rsbY6IPE9Ey3ZU3ZNeLLVg,,,N,0,0,,,2012-06-19 11:46,2012-06-20 10:09,admin,admin,,,
247,82505,773,10482,849,1,100,N,N,N,CP_Drtn,TT_Task,DT_FixedDUR2,RV_OK,TK_Complete,4229PMP50,Client approval on bid committee reccomendation,,,,0,0,0,0,16,0,0,0,,2011-12-29 00:00,2012-01-31 16:00,2012-12-31 08:00,2012-12-31 08:00,,2012-06-02 00:00,2012-06-02 00:00,,,2012-01-29 08:00,2012-01-30 16:00,,,,,PT_Normal,,,,,vxxcuYggT0WCewo2uTXEew,iKP7vyvUVkGYjFWGXsYtWw,,,N,0,0,,,2012-06-19 11:46,2012-06-20 10:09,admin,admin,,,
248,82506,773,10482,849,1,0,N,N,N,CP_Drtn,TT_Task,DT_FixedDUR2,RV_OK,TK_NotStart,4229PMP80,L.C issued by Gupco,,2640,2640,40,0,0,0,40,0,0,0,,,,2013-09-22 08:00,2013-09-26 16:00,,2012-06-03 08:00,2012-06-07 16:00,2012-06-03 08:00,2012-06-07 16:00,2012-06-03 08:00,2012-06-07 16:00,,2013-09-22 08:00,2013-09-26 16:00,,PT_Normal,,,,,l4e8x5UEPU+MDxMAFTeP8Q,/xqtBKQ3QEuTmEP+B+vEag,,,N,0,0,,,2012-06-19 11:46,2012-06-20 09:59,admin,admin,,,
249,82507,773,10482,849,1,100,N,N,N,CP_Drtn,TT_Task,DT_FixedDUR2,RV_OK,TK_Complete,4229PMP10,Issue RFQ for MPFM,,,,0,0,0,0,16,0,0,0,,2011-10-09 00:00,2011-10-09 00:00,2012-12-31 08:00,2012-12-31 08:00,,2012-06-02 00:00,2012-06-02 00:00,,,2011-08-15 08:00,2011-08-16 16:00,,,,,PT_Normal,,,,,SBBeQd3oFk+t//F9bL19qw,PapX/E/5VEedYgMn9pW1WA,,,N,0,0,,,2012-06-19 11:46,2012-06-20 10:09,admin,admin,,,
250,82508,773,10482,850,1,100,N,N,N,CP_Drtn,TT_Task,DT_FixedDUR2,RV_OK,TK_Complete,4229PMP20,Bidding for MPFM,,,,0,0,0,0,240,0,0,0,,2011-10-10 00:00,2011-11-13 00:00,2012-12-31 08:00,2012-12-31 08:00,,2012-06-02 00:00,2012-06-02 00:00,,,2011-08-17 08:00,2011-09-15 16:00,,,,,PT_Normal,,,,,b8trjVeKLUGE+sg/uLEeRQ,WAPraHdgpEiuGrgnPTRw+A,,,N,0,0,,,2012-06-19 11:46,2012-06-20 10:09,admin,admin,,,
251,82509,773,10482,849,1,100,N,N,N,CP_Drtn,TT_Task,DT_FixedDUR2,RV_OK,TK_Complete,4229PMP60,F.O.C for MPFM,,,,0,0,0,0,24,0,0,0,,2012-02-01 00:00,2012-02-08 16:00,2012-12-31 08:00,2012-12-31 08:00,,2012-06-02 00:00,2012-06-02 00:00,,,2012-01-31 08:00,2012-02-02 16:00,,,,,PT_Normal,,,,,47Bze6jDik+iqkebiWBnOg,4AXOah8HAEeGpjijEBPUrg,,,N,0,0,,,2012-06-19 11:46,2012-06-20 10:09,admin,admin,,,
252,82510,773,10482,849,1,100,N,N,N,CP_Drtn,TT_Task,DT_FixedDUR2,RV_OK,TK_Complete,4229PMP70,P.O for MPFM,,,,0,0,0,0,16,0,0,0,,2012-02-20 00:00,2012-02-21 00:00,2012-12-31 08:00,2012-12-31 08:00,,2012-06-02 00:00,2012-06-02 00:00,,,2012-03-04 08:00,2012-03-05 16:00,,,,,PT_Normal,,,,,ll/22RrjsEGzpGKAXGOtxw,AvajsHLxjEGyyQn6kYuXCQ,,,N,0,0,,,2012-06-19 11:46,2012-06-20 10:09,admin,admin,,,
253,82511,773,10482,849,1,100,N,N,N,CP_Drtn,TT_Task,DT_FixedDUR2,RV_OK,TK_Complete,4229PMP40,commercial evaluation & bid committee for MPFM,,,,0,0,0,0,80,0,0,0,,2011-12-27 00:00,2011-12-28 00:00,2012-12-31 08:00,2012-12-31 08:00,,2012-06-02 00:00,2012-06-02 00:00,,,2012-01-01 08:00,2012-01-12 16:00,,,,,PT_Normal,,,,,Cl+MfyKcRUuClVBweQBW3Q,e/V43NRVMUS133iTAw1J2Q,,,N,0,0,,,2012-06-19 11:46,2012-06-20 10:09,admin,admin,,,
254,82512,773,10482,849,1,100,N,N,N,CP_Drtn,TT_LOE,DT_FixedDUR2,RV_OK,TK_Complete,A1240,T.E.R for MPFM,,,,0,0,0,0,160,0,0,0,,2011-11-14 00:00,2011-12-21 00:00,,,,,,,,2011-12-04 08:00,2011-12-29 16:00,,,,,PT_Normal,,,,,zx8YJfRbWUiibkyUxnEerw,WzgvWtSfhU2NzXehbY6bPQ,,,N,0,0,,,2012-06-19 11:46,2012-06-19 11:46,admin,admin,,,
255,82513,773,10482,849,1,100,N,N,N,CP_Drtn,TT_LOE,DT_FixedDrtn,RV_OK,TK_Complete,A1460,MRP for MPFM,,,,0,0,0,0,40,0,0,0,,2012-02-09 00:00,2012-02-20 00:00,,,,,,,,2012-03-04 08:00,2012-03-08 16:00,,,,,PT_Normal,,,,,m2rXf4tm20aVQ1e/UpU++w,T+0ciQgipEq2+vMtZIK5pQ,,,N,0,0,,,2012-06-19 11:46,2012-06-19 11:46,admin,admin,,,
256,82514,773,10464,849,1,100,N,N,N,CP_Drtn,TT_Task,DT_FixedDUR2,RV_OK,TK_Complete,4229PSV30,Receive revised commercial offers,,,,0,0,0,0,40,0,0,0,,2012-02-01 08:00,2012-02-27 00:00,2012-12-24 08:00,2012-12-24 08:00,,2012-06-02 00:00,2012-06-02 00:00,,,2012-02-01 08:00,2012-02-07 16:00,,,,,PT_Normal,,,,,1JWw4+cxJ0u3iXDGI1EfwQ,AYPNiDXaKE6RLh7mqlxUcQ,,,N,0,0,,,2012-06-19 11:46,2012-06-20 10:09,admin,admin,,,
257,82515,773,10464,849,1,100,N,N,N,CP_Drtn,TT_Task,DT_FixedDUR2,RV_OK,TK_Complete,4229PSV50,Client approval on bid committee reccomendation,,,,0,0,0,0,16,0,0,0,,2012-03-07 00:00,2012-04-02 00:00,2012-12-24 08:00,2012-12-24 08:00,,2012-06-02 00:00,2012-06-02 00:00,,,2012-04-01 08:00,2012-04-02 16:00,,,,,PT_Normal,,,,,7gppi1HQvkCUAwCJCQq8Xg,okMlSxQPlUu8ymqN/KtiYQ,,,N,0,0,,,2012-06-19 11:46,2012-06-20 10:09,admin,admin,,,
258,82516,773,10464,849,1,0,N,N,N,CP_Drtn,TT_Task,DT_FixedDUR2,RV_OK,TK_NotStart,4229PSV80,L.C issued by Gupco,,1088,0,40,0,0,0,40,0,0,0,,,,2012-12-24 08:00,2012-12-30 16:00,,2012-06-03 08:00,2012-06-07 16:00,2012-06-03 08:00,2012-06-07 16:00,2012-06-03 08:00,2012-06-07 16:00,,2012-12-24 08:00,2012-12-30 16:00,,PT_Normal,,,,,mbgv98N3sEuvRA60VS+b0Q,8XeEO//CcEKYVr5WUWm1nw,,,N,0,0,,,2012-06-19 11:46,2012-06-20 09:59,admin,admin,,,
259,82517,773,10464,850,1,0,N,N,N,CP_Drtn,TT_Task,DT_FixedDUR2,RV_OK,TK_Active,4229PSV90,Fabrication upto R.F.S,,1552,0,672,0,0,0,1176,0,0,0,,2012-04-11 00:00,,2012-12-31 08:00,2013-03-24 16:00,2012-09-11 16:00,2012-06-08 08:00,2012-09-11 16:00,2012-06-08 08:00,2012-09-11 16:00,2012-04-06 08:00,2012-09-11 16:00,,2012-12-31 08:00,2013-03-24 16:00,,PT_Normal,,,,,Ui+UP6iHgkywL35uTQ4rDw,erBLKNm/ZUeEO9HJpLgTjg,,,N,0,0,,,2012-06-19 11:46,2012-06-20 09:59,admin,admin,,,
260,82518,773,10464,851,1,0,N,N,N,CP_Drtn,TT_Task,DT_FixedDUR2,RV_OK,TK_NotStart,4229PSV100,Delivery upto site,,2944,920,112,0,0,0,112,0,0,0,,,,2013-09-13 08:00,2013-09-26 16:00,,2012-09-12 08:00,2012-09-25 16:00,2012-09-12 08:00,2012-09-25 16:00,2012-09-12 08:00,2012-09-25 16:00,,2013-09-13 08:00,2013-09-26 16:00,,PT_Normal,,,,,27MKNBbCm0aKsU1MR0Ttpg,PvZx3hz21kCQaaYCBE4F/Q,,,N,0,0,,,2012-06-19 11:46,2012-06-20 09:59,admin,admin,,,
261,82519,773,10464,849,1,100,N,N,N,CP_Drtn,TT_Task,DT_FixedDUR2,RV_OK,TK_Complete,4229PSV10,Issue RFQ for PSV,,,,0,0,0,0,16,0,0,0,,2011-10-19 00:00,2011-10-20 00:00,2012-12-24 08:00,2012-12-24 08:00,,2012-06-02 00:00,2012-06-02 00:00,,,2011-10-16 08:00,2011-10-17 16:00,,,,,PT_Normal,,,,,gzGd6tCpJ0+LkaRcRKQ/pw,iEmal3hge0uAij6Wk9qVTQ,,,N,0,0,,,2012-06-19 11:46,2012-06-20 10:09,admin,admin,,,
262,82520,773,10464,850,1,100,N,N,N,CP_Drtn,TT_Task,DT_FixedDUR2,RV_OK,TK_Complete,4229PSV20,Bidding for PSV,,,,0,0,0,0,240,0,0,0,,2011-10-21 00:00,2011-11-16 00:00,2012-12-24 08:00,2012-12-24 08:00,,2012-06-02 00:00,2012-06-02 00:00,,,2011-10-18 08:00,2011-11-16 16:00,,,,,PT_Normal,,,,,mxvUxE/A0EiAk5ksJrz7Hw,x88PzjMZV0GiGu49qJdzgw,,,N,0,0,,,2012-06-19 11:46,2012-06-20 10:09,admin,admin,,,
263,82521,773,10464,849,1,100,N,N,N,CP_Drtn,TT_Task,DT_FixedDUR2,RV_OK,TK_Complete,4229PSV40,commercial evaluation & bid committee for PSV,,,,0,0,0,0,80,0,0,0,,2012-02-28 00:00,2012-03-06 00:00,2012-12-24 08:00,2012-12-24 08:00,,2012-06-02 00:00,2012-06-02 00:00,,,2012-03-04 08:00,2012-03-15 16:00,,,,,PT_Normal,,,,,HFBz/v+GckCPo1cGbMMofA,ZFrWAGC2TE+1R7WsidTdYQ,,,N,0,0,,,2012-06-19 11:46,2012-06-20 10:09,admin,admin,,,
264,82522,773,10464,849,1,100,N,N,N,CP_Drtn,TT_Task,DT_FixedDUR2,RV_OK,TK_Complete,4229PSV60,F.O.C for PSV,,,,0,0,0,0,24,0,0,0,,2012-04-02 00:00,2012-04-03 00:00,2012-12-24 08:00,2012-12-24 08:00,,2012-06-02 00:00,2012-06-02 00:00,,,2012-04-03 08:00,2012-04-05 16:00,,,,,PT_Normal,,,,,plWPmrjZ50u4fbSzWm5t4A,plWp9w3MSEaEBD3XTKD6uw,,,N,0,0,,,2012-06-19 11:46,2012-06-20 10:09,admin,admin,,,
265,82523,773,10464,849,1,100,N,N,N,CP_Drtn,TT_Task,DT_FixedDUR2,RV_OK,TK_Complete,4229PSV70,P.O for PSV,,,,0,0,0,0,40,0,0,0,,2012-04-10 08:00,2012-04-11 00:00,2012-12-24 08:00,2012-12-24 08:00,,2012-06-02 00:00,2012-06-02 00:00,,,2012-04-10 08:00,2012-04-16 16:00,,,,,PT_Normal,,,,,jmuAKCbng0+8KZQY+37DNg,XKuDtF9Y5kyIjE3UFTFzuw,,,N,0,0,,,2012-06-19 11:46,2012-06-20 10:09,admin,admin,,,
266,82524,773,10464,849,1,100,N,N,N,CP_Drtn,TT_LOE,DT_FixedDUR2,RV_OK,TK_Complete,A1040,T.E.R for PSV,,,,0,0,0,0,223,0,0,0,,2011-11-17 00:00,2012-01-31 00:00,,,,,,,,2011-11-16 08:00,2011-12-25 15:00,,,,,PT_Normal,,,,,or2TxrrTyEmnKUCpq5TFtA,b2YYy9o+s0qLd1hArx2WDQ,,,N,0,0,,,2012-06-19 11:46,2012-06-19 11:46,admin,admin,,,
267,82525,773,10464,849,1,100,N,N,N,CP_Drtn,TT_LOE,DT_FixedDUR2,RV_OK,TK_Complete,A1320,MRP for PSV,,,,0,0,0,0,16,0,0,0,,2012-04-05 08:00,2012-04-09 16:00,,,,,,,,2012-04-05 08:00,2012-04-08 16:00,,,,,PT_Normal,,,,,mhDfw03KCkOXIN32fptANw,ZXfVgzf22ESh29QZTh9ssg,,,N,0,0,,,2012-06-19 11:46,2012-06-19 11:46,admin,admin,,,
268,82526,773,10465,850,1,0,N,N,N,CP_Drtn,TT_Task,DT_FixedDUR2,RV_OK,TK_Active,4229POV90,Fabrication upto R.F.S,,1720,0,1200,0,0,0,1448,0,0,0,,2012-04-30 00:00,,2013-01-21 08:00,2013-06-19 16:00,2012-11-16 16:00,2012-06-08 08:00,2012-11-16 16:00,2012-06-08 08:00,2012-11-16 16:00,2012-05-08 08:00,2012-11-16 16:00,,2013-01-21 08:00,2013-06-19 16:00,,PT_Normal,,,,,sX2chyh8LkOH92WStUseEg,7UQ9XmTabEqxyA7/76n9MA,,,N,0,0,,,2012-06-19 11:46,2012-06-20 09:59,admin,admin,,,
269,82527,773,10465,850,1,0,N,N,N,CP_Drtn,TT_Task,DT_FixedDUR2,RV_OK,TK_NotStart,4229POV100,Delivery upto site,,2272,248,240,0,0,0,240,0,0,0,,,,2013-08-28 08:00,2013-09-26 16:00,,2012-11-17 08:00,2012-12-16 16:00,2012-11-17 08:00,2012-12-16 16:00,2012-11-17 08:00,2012-12-16 16:00,,2013-08-28 08:00,2013-09-26 16:00,,PT_Normal,,,,,yCTtmTc420aZqTP4DgDmMg,Ed1rw6pVGkqfXjRfFT7JpQ,,,N,0,0,,,2012-06-19 11:46,2012-06-20 09:59,admin,admin,,,
270,82528,773,10465,849,1,100,N,N,N,CP_Drtn,TT_Task,DT_FixedDUR2,RV_OK,TK_Complete,4229POV30,Receive revised commercial offers,,,,0,0,0,0,40,0,0,0,,2012-02-02 00:00,2012-02-16 00:00,2013-09-26 16:00,2013-09-26 16:00,,2012-06-02 00:00,2012-06-02 00:00,,,2012-03-08 08:00,2012-03-14 16:00,,,,,PT_Normal,,,,,p41qr0ActkGBgiLcadVDKQ,AYPNiDXaKE6RLh7mqlxUcQ,,,N,0,0,,,2012-06-19 11:46,2012-06-20 10:09,admin,admin,,,
271,82529,773,10465,849,1,100,N,N,N,CP_Drtn,TT_Task,DT_FixedDUR2,RV_OK,TK_Complete,4229POV50,Client approval on bid committee reccommendation,,,,0,0,0,0,16,0,0,0,,2012-03-05 00:00,2012-03-28 00:00,2013-01-14 08:00,2013-01-14 08:00,,2012-06-02 00:00,2012-06-02 00:00,,,2012-04-03 08:00,2012-04-04 16:00,,,,,PT_Normal,,,,,TIhVN5X8x0KOl9XEaQqJmA,okMlSxQPlUu8ymqN/KtiYQ,,,N,0,0,,,2012-06-19 11:46,2012-06-20 10:09,admin,admin,,,
272,82530,773,10465,849,1,0,N,N,N,CP_Drtn,TT_Task,DT_FixedDUR2,RV_OK,TK_NotStart,4229POV80,L.C issued by Gupco,,1208,0,40,0,0,0,40,0,0,0,,,,2013-01-14 08:00,2013-01-20 16:00,,2012-06-03 08:00,2012-06-07 16:00,2012-06-03 08:00,2012-06-07 16:00,2012-06-03 08:00,2012-06-07 16:00,,2013-01-14 08:00,2013-01-20 16:00,,PT_Normal,,,,,gvs1xWM48UKUWDleSDI2JQ,8XeEO//CcEKYVr5WUWm1nw,,,N,0,0,,,2012-06-19 11:46,2012-06-20 09:59,admin,admin,,,
273,82531,773,10465,849,1,100,N,N,N,CP_Drtn,TT_Task,DT_FixedDUR2,RV_OK,TK_Complete,4229POV10,Issue RFQ for SDV,,,,0,0,0,0,16,0,0,0,,2011-10-27 00:00,2011-10-27 00:00,2013-09-26 16:00,2013-09-26 16:00,,2012-06-02 00:00,2012-06-02 00:00,,,2011-10-20 08:00,2011-10-23 16:00,,,,,PT_Normal,,,,,IUwELZM3W0ajzk3gWs66dw,iEmal3hge0uAij6Wk9qVTQ,,,N,0,0,,,2012-06-19 11:46,2012-06-20 10:09,admin,admin,,,
274,82532,773,10465,850,1,100,N,N,N,CP_Drtn,TT_Task,DT_FixedDUR2,RV_OK,TK_Complete,4229POV20,Bidding for SDV,,,,0,0,0,0,240,0,0,0,,2011-10-28 00:00,2011-11-27 00:00,2013-09-26 16:00,2013-09-26 16:00,,2012-06-02 00:00,2012-06-02 00:00,,,2011-11-01 08:00,2011-11-30 16:00,,,,,PT_Normal,,,,,g+V0XryIc0uUDFRKzM8fvg,x88PzjMZV0GiGu49qJdzgw,,,N,0,0,,,2012-06-19 11:46,2012-06-20 10:09,admin,admin,,,
275,82533,773,10465,849,1,100,N,N,N,CP_Drtn,TT_Task,DT_FixedDUR2,RV_OK,TK_Complete,4229POV40,Commercial evaluation & bid committee for SDV,,,,0,0,0,0,80,0,0,0,,2012-02-16 00:00,2012-02-19 00:00,2013-01-14 08:00,2013-01-14 08:00,,2012-06-02 00:00,2012-06-02 00:00,,,2012-03-15 08:00,2012-03-28 16:00,,,,,PT_Normal,,,,,09qHwCc79UyNG+i31HJEEw,ZFrWAGC2TE+1R7WsidTdYQ,,,N,0,0,,,2012-06-19 11:46,2012-06-20 10:09,admin,admin,,,
276,82534,773,10465,849,1,100,N,N,N,CP_Drtn,TT_Task,DT_FixedDUR2,RV_OK,TK_Complete,4229POV60,F.O.C for SDV,,,,0,0,0,0,16,0,0,0,,2012-03-29 00:00,2012-04-22 00:00,2013-01-14 08:00,2013-01-14 08:00,,2012-06-02 00:00,2012-06-02 00:00,,,2012-04-01 08:00,2012-04-02 16:00,,,,,PT_Normal,,,,,c7JfjOLZQUiTCtvovS8vRg,plWp9w3MSEaEBD3XTKD6uw,,,N,0,0,,,2012-06-19 11:46,2012-06-20 10:09,admin,admin,,,
277,82535,773,10465,849,1,100,N,N,N,CP_Drtn,TT_Task,DT_FixedDUR2,RV_OK,TK_Complete,4229POV70,P.O for SDV,,,,0,0,0,0,16,0,0,0,,2012-04-29 00:00,2012-04-29 00:00,2013-01-14 08:00,2013-01-14 08:00,,2012-06-02 00:00,2012-06-02 00:00,,,2012-04-29 08:00,2012-04-30 16:00,,,,,PT_Normal,,,,,YaBvJm+X+kyQFkQjYKReuQ,XKuDtF9Y5kyIjE3UFTFzuw,,,N,0,0,,,2012-06-19 11:46,2012-06-20 10:09,admin,admin,,,
278,82536,773,10465,849,1,100,N,N,N,CP_Drtn,TT_LOE,DT_FixedDUR2,RV_OK,TK_Complete,A1270,T.E.R for SDV,,,,0,0,0,0,160,0,0,0,,2011-11-28 00:00,2012-02-01 16:00,,,,,,,,2011-12-04 08:00,2011-12-29 16:00,,,,,PT_Normal,,,,,Ob+de+AGHEisJ0PUj0gZrg,oLwPrR8dtkKCqtyNJtHEow,,,N,0,0,,,2012-06-19 11:46,2012-06-19 11:46,admin,admin,,,
279,82537,773,10465,849,1,100,N,N,N,CP_Drtn,TT_LOE,DT_FixedDUR2,RV_OK,TK_Complete,A1490,MRP for SDV,,,,0,0,0,0,40,0,0,0,,2012-04-22 00:00,2012-04-26 00:00,,,,,,,,2012-04-29 08:00,2012-05-03 16:00,,,,,PT_Normal,,,,,dVneZVbroUW5/38Xp4lI8Q,TrMWPgitaUmZGiDj84RmyQ,,,N,0,0,,,2012-06-19 11:46,2012-06-19 11:46,admin,admin,,,
280,82538,773,10466,850,1,100,N,N,N,CP_Drtn,TT_Task,DT_FixedDUR2,RV_OK,TK_Complete,4229PPB20,Bidding for Piping bulk,,,,0,0,0,0,112,0,0,0,,2011-11-25 00:00,2011-12-20 00:00,2013-06-13 08:00,2013-06-13 08:00,,2012-06-02 00:00,2012-06-02 00:00,,,2011-12-06 08:00,2011-12-19 16:00,,,,,PT_Normal,,,,,ir4pCSLTeEa4UGJ+v/yDhw,x88PzjMZV0GiGu49qJdzgw,,,N,0,0,,,2012-06-19 11:46,2012-06-20 10:09,admin,admin,,,
281,82539,773,10466,849,1,100,N,N,N,CP_Drtn,TT_Task,DT_FixedDUR2,RV_OK,TK_Complete,4229PPB40,commercial evaluation & bid committee for Piping bulk,,,,0,0,0,0,96,0,0,0,,2012-02-08 00:00,2012-02-23 00:00,2013-06-13 08:00,2013-06-13 08:00,,2012-06-02 00:00,2012-06-02 00:00,,,2012-03-11 08:00,2012-03-26 16:00,,,,,PT_Normal,,,,,BgvOr+LiZEyyCjskL9rbAg,ZFrWAGC2TE+1R7WsidTdYQ,,,N,0,0,,,2012-06-19 11:46,2012-06-20 10:09,admin,admin,,,
282,82540,773,10466,849,1,100,N,N,N,CP_Drtn,TT_Task,DT_FixedDUR2,RV_OK,TK_Complete,4229PPB60,F.O.C for Piping bulk,,,,0,0,0,0,24,0,0,0,,2012-03-01 00:00,2012-03-18 00:00,2013-06-13 08:00,2013-06-13 08:00,,2012-06-02 00:00,2012-06-02 00:00,,,2012-04-03 08:00,2012-04-05 16:00,,,,,PT_Normal,,,,,ON+odhGMjEiTeT/JHgfjSQ,plWp9w3MSEaEBD3XTKD6uw,,,N,0,0,,,2012-06-19 11:46,2012-06-20 10:09,admin,admin,,,
283,82541,773,10466,849,1,100,N,N,N,CP_Drtn,TT_Task,DT_FixedDUR2,RV_OK,TK_Complete,4229PPB70,P.O for Piping bulk,,,,0,0,0,0,16,0,0,0,,2012-03-28 00:00,2012-03-29 00:00,2013-06-13 08:00,2013-06-13 08:00,,2012-06-02 00:00,2012-06-02 00:00,,,2012-04-01 08:00,2012-04-02 16:00,,,,,PT_Normal,,,,,LIRAStdRC02Il/VbKzUd+w,XKuDtF9Y5kyIjE3UFTFzuw,,,N,0,0,,,2012-06-19 11:46,2012-06-20 10:09,admin,admin,,,
284,82542,773,10466,849,1,100,N,N,N,CP_Drtn,TT_LOE,DT_FixedDUR2,RV_OK,TK_Complete,A1100,T.E.R for Piping bulk,,,,0,0,0,0,120,0,0,0,,2011-12-22 00:00,2012-01-26 00:00,,,,,,,,2011-12-13 08:00,2012-01-02 16:00,,,,,PT_Normal,,,,,KtSRDGvzc0mfLvYZKhpxrA,ffGWAsroqUC7EdTJZrAS1A,,,N,0,0,,,2012-06-19 11:46,2012-06-19 11:46,admin,admin,,,
285,82543,773,10466,849,1,100,N,N,N,CP_Drtn,TT_LOE,DT_FixedDUR2,RV_OK,TK_Complete,A1370,MRP for Piping bulk,,,,0,0,0,0,56,0,0,0,,2012-03-19 08:00,2012-03-27 16:00,,,,,,,,2012-03-19 08:00,2012-03-27 16:00,,,,,PT_Normal,,,,,j8Bebp4pI0292DrNd/b4+w,v+2pKzAUI0aArXAlsWBTTg,,,N,0,0,,,2012-06-19 11:46,2012-06-19 11:46,admin,admin,,,
286,82544,773,10466,849,1,100,N,N,N,CP_Drtn,TT_Task,DT_FixedDUR2,RV_OK,TK_Complete,4229PPB30,Receive revised commercial offers,,,,0,0,0,0,40,0,0,0,,2012-01-25 00:00,2012-02-07 00:00,2013-06-13 08:00,2013-06-13 08:00,,2012-06-02 00:00,2012-06-02 00:00,,,2012-01-26 08:00,2012-02-01 16:00,,,,,PT_Normal,,,,,snVRy8+idUyoSuA0t8M7JA,AYPNiDXaKE6RLh7mqlxUcQ,,,N,0,0,,,2012-06-19 11:46,2012-06-20 10:09,admin,admin,,,
287,82545,773,10466,849,1,100,N,N,N,CP_Drtn,TT_Task,DT_FixedDUR2,RV_OK,TK_Complete,4229PPB50,Client approval on bid committee reccomendation,,,,0,0,0,0,16,0,0,0,,2012-02-23 00:00,2012-02-29 00:00,2013-06-13 08:00,2013-06-13 08:00,,2012-06-02 00:00,2012-06-02 00:00,,,2012-03-04 08:00,2012-03-05 16:00,,,,,PT_Normal,,,,,os5aawjFb0apMZaWXD9z/Q,okMlSxQPlUu8ymqN/KtiYQ,,,N,0,0,,,2012-06-19 11:46,2012-06-20 10:09,admin,admin,,,
288,82546,773,10466,850,1,0,N,N,N,CP_Drtn,TT_Task,DT_FixedDUR2,RV_OK,TK_NotStart,4229PPB110,Fabrication upto R.F.S for minimal piping balance,,1592,0,960,0,0,0,960,0,0,0,,,,2013-04-15 08:00,2013-08-12 16:00,,2012-09-28 08:00,2013-01-25 16:00,2012-09-28 08:00,2013-01-25 16:00,2012-09-28 08:00,2013-01-25 16:00,,2013-04-15 08:00,2013-08-12 16:00,,PT_Normal,,,,,NWPJ0y5ATkqTZ4pjlft9VQ,,,,N,0,0,,,2012-06-19 11:46,2012-06-20 09:59,admin,admin,,,
289,82547,773,10466,851,1,0,N,N,N,CP_Drtn,TT_Task,DT_FixedDUR2,RV_OK,TK_NotStart,4229PPB120,Delivery upto site (2nd Batch) for minimal piping balance,,1592,0,360,0,0,0,360,0,0,0,,,,2013-08-13 08:00,2013-09-26 16:00,,2013-01-26 08:00,2013-03-11 16:00,2013-01-26 08:00,2013-03-11 16:00,2013-01-26 08:00,2013-03-11 16:00,,2013-08-13 08:00,2013-09-26 16:00,,PT_Normal,,,,,533hrtKHKUyDBh0pQLqyqw,,,,N,0,0,,,2012-06-19 11:46,2012-06-20 09:59,admin,admin,,,
290,82548,773,10466,849,1,0,N,N,N,CP_Drtn,TT_Task,DT_FixedDUR2,RV_OK,TK_NotStart,4229PPB80,L.C issued by Gupco,,2072,0,40,0,0,0,40,0,0,0,,,,2013-06-13 08:00,2013-06-19 16:00,,2012-06-03 08:00,2012-06-07 16:00,2012-06-03 08:00,2012-06-07 16:00,2012-06-03 08:00,2012-06-07 16:00,,2013-06-13 08:00,2013-06-19 16:00,,PT_Normal,,,,,n+J3Fx3eqk6VWo1nq7wQPQ,8XeEO//CcEKYVr5WUWm1nw,,,N,0,0,,,2012-06-19 11:46,2012-06-20 09:59,admin,admin,,,
291,82549,773,10466,851,1,0,N,N,N,CP_Drtn,TT_Task,DT_FixedDUR2,RV_OK,TK_NotStart,4229PPB100,Delivery upto site (1st Batch),,3032,1008,360,0,0,0,360,0,0,0,,,,2013-08-13 08:00,2013-09-26 16:00,,2012-08-01 08:00,2012-09-14 16:00,2012-08-01 08:00,2012-09-14 16:00,2012-08-01 08:00,2012-09-14 16:00,,2013-08-13 08:00,2013-09-26 16:00,,PT_Normal,,,,,Evgup1akb0SbznaDtD8mDA,,,,N,0,0,,,2012-06-19 11:46,2012-06-20 09:59,admin,admin,,,
292,82550,773,10466,850,1,0,N,N,N,CP_Drtn,TT_Task,DT_FixedDUR2,RV_OK,TK_Active,4229PPB90,Fabrication upto R.F.S (1st Batch),,2920,0,432,0,0,0,784,0,0,0,,2012-04-01 00:00,,2013-06-20 08:00,2013-08-12 16:00,2012-07-31 16:00,2012-06-08 08:00,2012-07-31 16:00,2012-06-08 08:00,2012-07-31 16:00,2012-04-06 08:00,2012-07-12 16:00,,2013-06-20 08:00,2013-08-12 16:00,,PT_Normal,,,,,w0JOT/lHR0e+xUPQuh0hWA,,,,N,0,0,,,2012-06-19 11:46,2012-06-20 09:59,admin,admin,,,
293,82551,773,10466,849,1,100,N,N,N,CP_Drtn,TT_Task,DT_FixedDUR2,RV_OK,TK_Complete,4229PPB10,Issue RFQ for Piping bulk,,,,0,0,0,0,16,0,0,0,,2011-11-24 00:00,2011-11-24 00:00,2013-06-13 08:00,2013-06-13 08:00,,2012-06-02 00:00,2012-06-02 00:00,,,2011-12-04 08:00,2011-12-05 16:00,,,,,PT_Normal,,,,,sA+qydF0XUaYULm9qkX5Uw,iEmal3hge0uAij6Wk9qVTQ,,,N,0,0,,,2012-06-19 11:46,2012-06-20 10:09,admin,admin,,,
294,82552,773,10467,850,1,100,N,N,N,CP_Drtn,TT_Task,DT_FixedDUR2,RV_OK,TK_Complete,4229PPV20,Bidding for Piping valves,,,,0,0,0,0,112,0,0,0,,2011-12-09 00:00,2012-01-03 00:00,2013-01-14 08:00,2013-01-14 08:00,,2012-06-02 00:00,2012-06-02 00:00,,,2012-01-08 08:00,2012-01-21 16:00,,,,,PT_Normal,,,,,IlTdjTWzvUanuzIcJbtl+g,WAPraHdgpEiuGrgnPTRw+A,,,N,0,0,,,2012-06-19 11:46,2012-06-20 10:09,admin,admin,,,
295,82553,773,10467,849,1,100,N,N,N,CP_Drtn,TT_Task,DT_FixedDUR2,RV_OK,TK_Complete,4229PPV40,commercial evaluation & bid committee for Piping valves,,,,0,0,0,0,80,0,0,0,,2012-02-23 00:00,2012-03-14 00:00,2013-01-14 08:00,2013-01-14 08:00,,2012-06-02 00:00,2012-06-02 00:00,,,2012-03-11 08:00,2012-03-22 16:00,,,,,PT_Normal,,,,,q+Dsg6Onz0qZLzlfxXSuEA,e/V43NRVMUS133iTAw1J2Q,,,N,0,0,,,2012-06-19 11:46,2012-06-20 10:09,admin,admin,,,
296,82554,773,10467,849,1,100,N,N,N,CP_Drtn,TT_Task,DT_FixedDUR2,RV_OK,TK_Complete,4229PPV60,F.O.C for Piping valves,,,,0,0,0,0,24,0,0,0,,2012-04-05 00:00,2012-04-05 00:00,2013-01-14 08:00,2013-01-14 08:00,,2012-06-02 00:00,2012-06-02 00:00,,,2012-04-09 08:00,2012-04-11 16:00,,,,,PT_Normal,,,,,k1C/RTsLdEShP3Q/4kxEdA,4AXOah8HAEeGpjijEBPUrg,,,N,0,0,,,2012-06-19 11:46,2012-06-20 10:09,admin,admin,,,
297,82555,773,10467,849,1,100,N,N,N,CP_Drtn,TT_Task,DT_FixedDUR2,RV_OK,TK_Complete,4229PPV70,P.O for Piping valves,,,,0,0,0,0,16,0,0,0,,2012-04-12 08:00,2012-04-17 00:00,2013-01-14 08:00,2013-01-14 08:00,,2012-06-02 00:00,2012-06-02 00:00,,,2012-04-12 08:00,2012-04-15 16:00,,,,,PT_Normal,,,,,njZUKl/QHk+EkQQ3Y1PUXA,AvajsHLxjEGyyQn6kYuXCQ,,,N,0,0,,,2012-06-19 11:46,2012-06-20 10:09,admin,admin,,,
298,82556,773,10467,850,1,0,N,N,N,CP_Drtn,TT_Task,DT_FixedDUR2,RV_OK,TK_Active,4229PPV90,Fabrication upto R.F.S (1st Batch),,1720,0,584,0,0,0,1088,0,0,0,,2012-04-17 00:00,,2013-01-21 08:00,2013-04-03 16:00,2012-08-19 16:00,2012-06-08 08:00,2012-08-19 16:00,2012-06-08 08:00,2012-08-19 16:00,2012-04-06 08:00,2012-08-19 16:00,,2013-01-21 08:00,2013-04-03 16:00,,PT_Normal,,,,,fHTtCZboRECK/PRdnbA/cA,7UQ9XmTabEqxyA7/76n9MA,,,N,0,0,,,2012-06-19 11:46,2012-06-20 09:59,admin,admin,,,
299,82557,773,10467,851,1,0,N,N,N,CP_Drtn,TT_Task,DT_FixedDUR2,RV_OK,TK_NotStart,4229PPV110,Delivery upto site (1st Batch),,3128,1536,112,0,0,0,112,0,0,0,,,,2013-09-13 08:00,2013-09-26 16:00,,2012-08-20 08:00,2012-09-02 16:00,2012-08-20 08:00,2012-09-02 16:00,2012-08-20 08:00,2012-09-02 16:00,,2013-09-13 08:00,2013-09-26 16:00,,PT_Normal,,,,,uiXvJpvmAUGMOtsywCb9ag,Ed1rw6pVGkqfXjRfFT7JpQ,,,N,0,0,,,2012-06-19 11:46,2012-06-20 09:59,admin,admin,,,
300,82558,773,10467,850,1,0,N,N,N,CP_Drtn,TT_Task,DT_FixedDUR2,RV_OK,TK_NotStart,4229PPV100,Fabrication upto R.F.S (2nd Batch) for minimal  balance,,1592,0,960,0,0,0,960,0,0,0,,,,2013-04-15 08:00,2013-08-12 16:00,,2012-09-28 08:00,2013-01-25 16:00,2012-09-28 08:00,2013-01-25 16:00,2012-09-28 08:00,2013-01-25 16:00,,2013-04-15 08:00,2013-08-12 16:00,,PT_Normal,,,,,MwJVJ1Vh8kuLGehh3LZRXA,,,,N,0,0,,,2012-06-19 11:46,2012-06-20 09:59,admin,admin,,,
301,82559,773,10467,851,1,0,N,N,N,CP_Drtn,TT_Task,DT_FixedDUR2,RV_OK,TK_NotStart,4229PPV120,Delivery upto site (2nd Batch) for minimal balance,,1592,0,360,0,0,0,360,0,0,0,,,,2013-08-13 08:00,2013-09-26 16:00,,2013-01-26 08:00,2013-03-11 16:00,2013-01-26 08:00,2013-03-11 16:00,2013-01-26 08:00,2013-03-11 16:00,,2013-08-13 08:00,2013-09-26 16:00,,PT_Normal,,,,,MrhUT/jn5kW+BuAnmw5Wog,,,,N,0,0,,,2012-06-19 11:46,2012-06-20 09:59,admin,admin,,,
302,82560,773,10467,849,1,100,N,N,N,CP_Drtn,TT_Task,DT_FixedDUR2,RV_OK,TK_Complete,4229PPV30,Receive revised commercial offers,,,,0,0,0,0,40,0,0,0,,2012-02-09 00:00,2012-02-22 00:00,2013-01-14 08:00,2013-01-14 08:00,,2012-06-02 00:00,2012-06-02 00:00,,,2012-03-04 08:00,2012-03-08 16:00,,,,,PT_Normal,,,,,OgobRizNJ0uLM5jFXr9Y3Q,AYPNiDXaKE6RLh7mqlxUcQ,,,N,0,0,,,2012-06-19 11:46,2012-06-20 10:09,admin,admin,,,
303,82561,773,10467,849,1,100,N,N,N,CP_Drtn,TT_Task,DT_FixedDUR2,RV_OK,TK_Complete,4229PPV50,Client approval on bid committee reccomendation,,,,0,0,0,0,16,0,0,0,,2012-03-15 00:00,2012-04-04 00:00,2013-01-14 08:00,2013-01-14 08:00,,2012-06-02 00:00,2012-06-02 00:00,,,2012-04-15 08:00,2012-04-16 16:00,,,,,PT_Normal,,,,,SLSErvGVFUqt8lFcex3D1Q,okMlSxQPlUu8ymqN/KtiYQ,,,N,0,0,,,2012-06-19 11:46,2012-06-20 10:09,admin,admin,,,
304,82562,773,10467,849,1,0,N,N,N,CP_Drtn,TT_Task,DT_FixedDUR2,RV_OK,TK_NotStart,4229PPV80,L.C issued by Gupco,,1208,0,40,0,0,0,40,0,0,0,,,,2013-01-14 08:00,2013-01-20 16:00,,2012-06-03 08:00,2012-06-07 16:00,2012-06-03 08:00,2012-06-07 16:00,2012-06-03 08:00,2012-06-07 16:00,,2013-01-14 08:00,2013-01-20 16:00,,PT_Normal,,,,,5s5qhOg9+E2gRTAsTXzNNw,8XeEO//CcEKYVr5WUWm1nw,,,N,0,0,,,2012-06-19 11:46,2012-06-20 09:59,admin,admin,,,
305,82563,773,10467,849,1,100,N,N,N,CP_Drtn,TT_Task,DT_FixedDUR2,RV_OK,TK_Complete,4229PPV10,Issue RFQ for Piping valves,,,,0,0,0,0,16,0,0,0,,2011-12-08 00:00,2011-12-08 00:00,2013-01-14 08:00,2013-01-14 08:00,,2012-06-02 00:00,2012-06-02 00:00,,,2012-01-01 08:00,2012-01-02 16:00,,,,,PT_Normal,,,,,w3NEAWs5Ik2L9bSrFcPlTQ,PapX/E/5VEedYgMn9pW1WA,,,N,0,0,,,2012-06-19 11:46,2012-06-20 10:09,admin,admin,,,
306,82564,773,10467,849,1,100,N,N,N,CP_Drtn,TT_LOE,DT_FixedDUR2,RV_OK,TK_Complete,A1110,T.E.R for Piping valves,,,,0,0,0,0,168,0,0,0,,2012-01-12 08:00,2012-02-08 00:00,,,,,,,,2012-01-12 08:00,2012-02-12 16:00,,,,,PT_Normal,,,,,oYSnz9E7ukqjC6FZvRqXwg,JiEJ7J2QxUaoab2mldizXA,,,N,0,0,,,2012-06-19 11:46,2012-06-19 11:46,admin,admin,,,
307,82565,773,10467,849,1,100,N,N,N,CP_Drtn,TT_LOE,DT_FixedDUR2,RV_OK,TK_Complete,A1380,MRP for Piping valves,,,,0,0,0,0,32,0,0,0,,2012-04-08 08:00,2012-04-12 00:00,,,,,,,,2012-04-08 08:00,2012-04-11 16:00,,,,,PT_Normal,,,,,gcDQXcFntkGd0ZwEGz3PMA,HVhuFiMzEUqRKoYy+1e1PQ,,,N,0,0,,,2012-06-19 11:46,2012-06-19 11:46,admin,admin,,,
308,82566,773,10468,849,1,100,N,N,N,CP_Drtn,TT_Task,DT_FixedDUR2,RV_OK,TK_Complete,4229PSU70,P.O for solar power unit,,,,0,0,0,0,40,0,0,0,,2012-04-01 08:00,2012-04-04 00:00,2012-12-24 08:00,2012-12-24 08:00,,2012-06-02 00:00,2012-06-02 00:00,,,2012-04-01 08:00,2012-04-05 16:00,,,,,PT_Normal,,,,,2wWYRs0ioEucv/9Sd7Utfw,AvajsHLxjEGyyQn6kYuXCQ,,,N,0,0,,,2012-06-19 11:46,2012-06-20 10:09,admin,admin,,,
309,82567,773,10468,850,1,0,N,N,N,CP_Drtn,TT_Task,DT_FixedDUR2,RV_OK,TK_Active,4229PSU90,Fabrication upto R.F.S,,1552,0,784,0,0,0,1400,0,0,0,,2012-04-05 00:00,,2012-12-31 08:00,2013-04-07 16:00,2012-09-25 16:00,2012-06-08 08:00,2012-09-25 16:00,2012-06-08 08:00,2012-09-25 16:00,2012-04-13 08:00,2012-10-16 16:00,,2012-12-31 08:00,2013-04-07 16:00,,PT_Normal,,,,,VFxGcuvJrU+oc/KdTwNtLQ,7UQ9XmTabEqxyA7/76n9MA,,,N,0,0,,,2012-06-19 11:46,2012-06-20 09:59,admin,admin,,,
310,82568,773,10468,851,1,0,N,N,N,CP_Drtn,TT_Task,DT_FixedDUR2,RV_OK,TK_NotStart,4229PSU100,Delivery upto site,,2584,560,360,0,0,0,360,0,0,0,,,,2013-08-13 08:00,2013-09-26 16:00,,2012-09-26 08:00,2012-11-09 16:00,2012-09-26 08:00,2012-11-09 16:00,2012-09-26 08:00,2012-11-09 16:00,,2013-08-13 08:00,2013-09-26 16:00,,PT_Normal,,,,,3zmQLYD9bEy8RjwFUziLhw,Ed1rw6pVGkqfXjRfFT7JpQ,,,N,0,0,,,2012-06-19 11:46,2012-06-20 09:59,admin,admin,,,
311,82569,773,10468,849,1,100,N,N,N,CP_Drtn,TT_Task,DT_FixedDUR2,RV_OK,TK_Complete,4229PSU30,Receive revised commercial offers,,,,0,0,0,0,40,0,0,0,,2012-02-01 00:00,2012-02-12 00:00,2012-12-24 08:00,2012-12-24 08:00,,2012-06-02 00:00,2012-06-02 00:00,,,2012-03-04 08:00,2012-03-08 16:00,,,,,PT_Normal,,,,,AizT5wCtL0mVqhD0p4sn9g,rsbY6IPE9Ey3ZU3ZNeLLVg,,,N,0,0,,,2012-06-19 11:46,2012-06-20 10:09,admin,admin,,,
312,82570,773,10468,849,1,100,N,N,N,CP_Drtn,TT_Task,DT_FixedDUR2,RV_OK,TK_Complete,4229PSU50,Client approval on bid committee reccomendation,,,,0,0,0,0,16,0,0,0,,2012-02-29 00:00,2012-03-11 00:00,2012-12-24 08:00,2012-12-24 08:00,,2012-06-02 00:00,2012-06-02 00:00,,,2012-03-06 08:00,2012-03-07 16:00,,,,,PT_Normal,,,,,yJL+qaowsUi01eUfLmgaaQ,iKP7vyvUVkGYjFWGXsYtWw,,,N,0,0,,,2012-06-19 11:46,2012-06-20 10:09,admin,admin,,,
313,82571,773,10468,849,1,0,N,N,N,CP_Drtn,TT_Task,DT_FixedDUR2,RV_OK,TK_NotStart,4229PSU80,L.C issued by Gupco,,1088,0,40,0,0,0,40,0,0,0,,,,2012-12-24 08:00,2012-12-30 16:00,,2012-06-03 08:00,2012-06-07 16:00,2012-06-03 08:00,2012-06-07 16:00,2012-06-03 08:00,2012-06-07 16:00,,2012-12-24 08:00,2012-12-30 16:00,,PT_Normal,,,,,UgqW8P1Ne0+dEvK9hanTDA,/xqtBKQ3QEuTmEP+B+vEag,,,N,0,0,,,2012-06-19 11:46,2012-06-20 09:59,admin,admin,,,
314,82572,773,10468,849,1,100,N,N,N,CP_Drtn,TT_Task,DT_FixedDUR2,RV_OK,TK_Complete,4229PSU10,Issue RFQ for solar power unit,,,,0,0,0,0,16,0,0,0,,2011-08-23 00:00,2011-08-24 00:00,2012-12-24 08:00,2012-12-24 08:00,,2012-06-02 00:00,2012-06-02 00:00,,,2011-08-15 08:00,2011-08-16 16:00,,,,,PT_Normal,,,,,nbHJS0UUPkSVZCDphYaDjA,PapX/E/5VEedYgMn9pW1WA,,,N,0,0,,,2012-06-19 11:46,2012-06-20 10:09,admin,admin,,,
315,82573,773,10468,849,1,100,N,N,N,CP_Drtn,TT_LOE,DT_FixedDUR2,RV_OK,TK_Complete,A1610,T.ER for solar power unit,,,,0,0,0,0,120,0,0,0,,2011-10-13 00:00,2012-01-31 00:00,,,,,,,,2011-10-02 08:00,2011-10-23 16:00,,,,,PT_Normal,,,,,RGTV7T5FJkaOtXIEBEmX/w,bw0IVSNTOUG6dpR2CW4B7w,,,N,0,0,,,2012-06-19 11:46,2012-06-19 11:46,admin,admin,,,
316,82574,773,10468,849,1,100,N,N,N,CP_Drtn,TT_LOE,DT_FixedDUR2,RV_OK,TK_Complete,A1420,MRP for solar power unit,,,,0,0,0,0,40,0,0,0,,2012-03-08 08:00,2012-03-28 00:00,,,,,,,,2012-03-08 08:00,2012-03-14 16:00,,,,,PT_Normal,,,,,tF9unaQO+06uze8X2iWDtA,1XvuEt/L4kaY7aCpdA1cKA,,,N,0,0,,,2012-06-19 11:46,2012-06-19 11:46,admin,admin,,,
317,82575,773,10468,850,1,100,N,N,N,CP_Drtn,TT_Task,DT_FixedDUR2,RV_OK,TK_Complete,4229PSU20,Bidding for solar power unit,,,,0,0,0,0,392,0,0,0,,2011-08-25 00:00,2011-10-13 00:00,2012-12-24 08:00,2012-12-24 08:00,,2012-06-02 00:00,2012-06-02 00:00,,,2011-08-17 08:00,2011-10-04 16:00,,,,,PT_Normal,,,,,UJgHzAH5xUqLuBxnLQuAIg,WAPraHdgpEiuGrgnPTRw+A,,,N,0,0,,,2012-06-19 11:46,2012-06-20 10:09,admin,admin,,,
318,82576,773,10468,849,1,100,N,N,N,CP_Drtn,TT_Task,DT_FixedDUR2,RV_OK,TK_Complete,4229PSU40,commercial evaluation & bid committee for solar power unit,,,,0,0,0,0,120,0,0,0,,2012-02-13 00:00,2012-02-29 00:00,2012-12-24 08:00,2012-12-24 08:00,,2012-06-02 00:00,2012-06-02 00:00,,,2012-03-11 08:00,2012-03-29 16:00,,,,,PT_Normal,,,,,q42+ng7BGE64Pu64kwfkig,e/V43NRVMUS133iTAw1J2Q,,,N,0,0,,,2012-06-19 11:46,2012-06-20 10:09,admin,admin,,,
319,82577,773,10468,849,1,100,N,N,N,CP_Drtn,TT_Task,DT_FixedDUR2,RV_OK,TK_Complete,4229PSU60,F.O.C for solar power unit,,,,0,0,0,0,24,0,0,0,,2012-03-28 00:00,2012-03-28 00:00,2012-12-24 08:00,2012-12-24 08:00,,2012-06-02 00:00,2012-06-02 00:00,,,2012-04-01 08:00,2012-04-03 16:00,,,,,PT_Normal,,,,,O0o0cvD0YUmlLy9ZaqQV8A,4AXOah8HAEeGpjijEBPUrg,,,N,0,0,,,2012-06-19 11:46,2012-06-20 10:09,admin,admin,,,
320,82578,773,10469,850,1,0,N,N,N,CP_Drtn,TT_Task,DT_FixedDUR2,RV_OK,TK_Active,4229PNA90,Fabrication upto R.F.S,,1720,0,192,0,0,0,1040,0,0,0,,2012-02-01 00:00,,2013-01-21 08:00,2013-02-13 16:00,2012-07-01 16:00,2012-06-08 08:00,2012-07-01 16:00,2012-06-08 08:00,2012-07-01 16:00,2012-04-06 08:00,2012-08-13 16:00,,2013-01-21 08:00,2013-02-13 16:00,,PT_Normal,,,,,gmZ63XVF9UOY19ANjawDeQ,ToVb42xRg0G2L0I31B6C+Q,,,N,0,0,,,2012-06-19 11:46,2012-06-20 09:59,admin,admin,,,
321,82579,773,10469,851,1,0,N,N,N,CP_Drtn,TT_Task,DT_FixedDUR2,RV_OK,TK_NotStart,4229PNA100,Delivery upto site,,3272,1248,360,0,0,0,360,0,0,0,,,,2013-08-13 08:00,2013-09-26 16:00,,2012-07-02 08:00,2012-08-15 16:00,2012-07-02 08:00,2012-08-15 16:00,2012-07-02 08:00,2012-08-15 16:00,,2013-08-13 08:00,2013-09-26 16:00,,PT_Normal,,,,,msWmievtI0qZH3vxrRr0Cg,lldIlyG8m0eNSv8NbxWToA,,,N,0,0,,,2012-06-19 11:46,2012-06-20 09:59,admin,admin,,,
322,82580,773,10469,849,1,100,N,N,N,CP_Drtn,TT_Task,DT_FixedDUR2,RV_OK,TK_Complete,4229PNA30,Receive revised commercial offers,,,,0,0,0,0,40,0,0,0,,2011-12-08 08:00,2011-12-13 00:00,2013-01-14 08:00,2013-01-14 08:00,,2012-06-02 00:00,2012-06-02 00:00,,,2011-12-08 08:00,2011-12-14 16:00,,,,,PT_Normal,,,,,MJth/eMuLUCCn3GTwNck4w,rsbY6IPE9Ey3ZU3ZNeLLVg,,,N,0,0,,,2012-06-19 11:46,2012-06-20 10:09,admin,admin,,,
323,82581,773,10469,849,1,100,N,N,N,CP_Drtn,TT_Task,DT_FixedDUR2,RV_OK,TK_Complete,4229PNA50,Client approval on bid committee reccomendation,,,,0,0,0,0,16,0,0,0,,2011-12-13 08:00,2012-01-11 16:00,2013-01-14 08:00,2013-01-14 08:00,,2012-06-02 00:00,2012-06-02 00:00,,,2011-12-13 08:00,2011-12-14 16:00,,,,,PT_Normal,,,,,f349XTDIjUKx2PTXbBlMFQ,iKP7vyvUVkGYjFWGXsYtWw,,,N,0,0,,,2012-06-19 11:46,2012-06-20 10:09,admin,admin,,,
324,82582,773,10469,849,1,0,N,N,N,CP_Drtn,TT_Task,DT_FixedDUR2,RV_OK,TK_NotStart,4229PNA80,L.C issued by Gupco,,1208,0,40,0,0,0,40,0,0,0,,,,2013-01-14 08:00,2013-01-20 16:00,,2012-06-03 08:00,2012-06-07 16:00,2012-06-03 08:00,2012-06-07 16:00,2012-06-03 08:00,2012-06-07 16:00,,2013-01-14 08:00,2013-01-20 16:00,,PT_Normal,,,,,0i/xpm1gjkOpsTjVr823fQ,/xqtBKQ3QEuTmEP+B+vEag,,,N,0,0,,,2012-06-19 11:46,2012-06-20 09:59,admin,admin,,,
325,82583,773,10469,849,1,100,N,N,N,CP_Drtn,TT_Task,DT_FixedDUR2,RV_OK,TK_Complete,4229PNA10,Issue RFQ for Navigation aids,,,,0,0,0,0,16,0,0,0,,2011-09-18 00:00,2011-09-18 00:00,2013-01-14 08:00,2013-01-14 08:00,,2012-06-02 00:00,2012-06-02 00:00,,,2011-08-15 08:00,2011-08-16 16:00,,,,,PT_Normal,,,,,Z8zClqJEiUGdzE9Krun+Bg,PapX/E/5VEedYgMn9pW1WA,,,N,0,0,,,2012-06-19 11:46,2012-06-20 10:09,admin,admin,,,
326,82584,773,10469,850,1,100,N,N,N,CP_Drtn,TT_Task,DT_FixedDUR2,RV_OK,TK_Complete,4229PNA20,Bidding for Navigation aids,,,,0,0,0,0,488,0,0,0,,2011-09-19 00:00,2011-10-16 16:00,2013-01-14 08:00,2013-01-14 08:00,,2012-06-02 00:00,2012-06-02 00:00,,,2011-08-17 08:00,2011-10-16 16:00,,,,,PT_Normal,,,,,trr4PP6suEOp7omAPjZiQQ,WAPraHdgpEiuGrgnPTRw+A,,,N,0,0,,,2012-06-19 11:46,2012-06-20 10:09,admin,admin,,,
327,82585,773,10469,849,1,100,N,N,N,CP_Drtn,TT_Task,DT_FixedDUR2,RV_OK,TK_Complete,4229PNA40,commercial evaluation & bid committee for Navigation aids,,,,0,0,0,0,80,0,0,0,,2011-12-14 00:00,2011-12-21 00:00,2013-01-14 08:00,2013-01-14 08:00,,2012-06-02 00:00,2012-06-02 00:00,,,2011-12-15 08:00,2011-12-28 16:00,,,,,PT_Normal,,,,,Bi1HxbxjzkSTlmbumSZ7Wg,e/V43NRVMUS133iTAw1J2Q,,,N,0,0,,,2012-06-19 11:46,2012-06-20 10:09,admin,admin,,,
328,82586,773,10469,849,1,100,N,N,N,CP_Drtn,TT_Task,DT_FixedDUR2,RV_OK,TK_Complete,4229PNA60,F.O.C for Navigation aids,,,,0,0,0,0,24,0,0,0,,2012-01-11 08:00,2012-01-12 00:00,2013-01-14 08:00,2013-01-14 08:00,,2012-06-02 00:00,2012-06-02 00:00,,,2012-01-11 08:00,2012-01-15 16:00,,,,,PT_Normal,,,,,tA+xueG/bEWAUFkmSU3avw,4AXOah8HAEeGpjijEBPUrg,,,N,0,0,,,2012-06-19 11:46,2012-06-20 10:09,admin,admin,,,
329,82587,773,10469,849,1,100,N,N,N,CP_Drtn,TT_Task,DT_FixedDUR2,RV_OK,TK_Complete,4229PNA70,P.O for Navigation aids,,,,0,0,0,0,40,0,0,0,,2012-01-19 08:00,2012-02-01 16:00,2013-01-14 08:00,2013-01-14 08:00,,2012-06-02 00:00,2012-06-02 00:00,,,2012-01-19 08:00,2012-01-26 16:00,,,,,PT_Normal,,,,,7FOz2nS/SUmQh5fKqzZuAQ,AvajsHLxjEGyyQn6kYuXCQ,,,N,0,0,,,2012-06-19 11:46,2012-06-20 10:09,admin,admin,,,
330,82588,773,10469,849,1,100,N,N,N,CP_Drtn,TT_LOE,DT_FixedDUR2,RV_OK,TK_Complete,4229EEL320,T.E.R for Navigation aids,,,,0,0,0,0,120,0,0,0,,2011-10-17 08:00,2011-12-07 16:00,,,,,,,,2011-10-17 08:00,2011-11-13 16:00,,,,,PT_Normal,,,,,WzkoF6xgEk2x3kT1uza7lA,swX0p19rSUOIwyjGZHXYnw,,,N,0,0,,,2012-06-19 11:46,2012-06-19 11:46,admin,admin,,,
331,82589,773,10469,849,1,100,N,N,N,CP_Drtn,TT_LOE,DT_FixedDUR2,RV_OK,TK_Complete,A1430,MRP for Navigation aids,,,,0,0,0,0,32,0,0,0,,2012-01-12 00:00,2012-01-18 00:00,,,,,,,,2012-01-12 08:00,2012-01-17 16:00,,,,,PT_Normal,,,,,IqisddY/2UiUWd/TvvPu0Q,IE+e2ItCW0OvW1HQfUiFIA,,,N,0,0,,,2012-06-19 11:46,2012-06-19 11:46,admin,admin,,,
332,82590,773,10470,850,1,0,N,N,N,CP_Drtn,TT_Task,DT_FixedDUR2,RV_OK,TK_NotStart,4229PEB90,Fabrication upto R.F.S,,2312,0,720,0,0,0,720,0,0,0,,,,2013-05-15 08:00,2013-08-12 16:00,,2012-07-18 08:00,2012-10-27 16:00,2012-07-18 08:00,2012-10-27 16:00,2012-07-18 08:00,2012-10-27 16:00,,2013-05-15 08:00,2013-08-12 16:00,,PT_Normal,,,,,v1Xi42fOnUqiG6IZ71yUNg,7UQ9XmTabEqxyA7/76n9MA,,,N,0,0,,,2012-06-19 11:46,2012-06-20 09:59,admin,admin,,,
333,82591,773,10470,851,1,0,N,N,N,CP_Drtn,TT_Task,DT_FixedDUR2,RV_OK,TK_NotStart,4229PEB100,Delivery upto site,,2328,304,360,0,0,0,360,0,0,0,,,,2013-08-13 08:00,2013-09-26 16:00,,2012-10-28 08:00,2012-12-11 16:00,2012-10-28 08:00,2012-12-11 16:00,2012-10-28 08:00,2012-12-11 16:00,,2013-08-13 08:00,2013-09-26 16:00,,PT_Normal,,,,,EDh9xLFE8E2GVW4TEef9DA,Ed1rw6pVGkqfXjRfFT7JpQ,,,N,0,0,,,2012-06-19 11:46,2012-06-20 09:59,admin,admin,,,
334,82592,773,10470,849,1,0,N,N,N,CP_Drtn,TT_Task,DT_FixedDUR2,RV_OK,TK_NotStart,4229PEB30,Receive revised commercial offers,,1640,0,40,0,0,0,40,0,0,0,,,,2013-04-01 08:00,2013-04-07 16:00,,2012-06-04 08:00,2012-06-10 16:00,2012-06-04 08:00,2012-06-10 16:00,2012-06-04 08:00,2012-06-10 16:00,,2013-04-01 08:00,2013-04-07 16:00,,PT_Normal,,,,,/yy59FpKqUi7dK3zhKsBaA,rsbY6IPE9Ey3ZU3ZNeLLVg,,,N,0,0,,,2012-06-19 11:46,2012-06-20 09:59,admin,admin,,,
335,82593,773,10470,849,1,0,N,N,N,CP_Drtn,TT_Task,DT_FixedDUR2,RV_OK,TK_NotStart,4229PEB50,Client approval on bid committee reccomendation,,1640,0,16,0,0,0,16,0,0,0,,,,2013-04-22 08:00,2013-04-23 16:00,,2012-06-25 08:00,2012-06-26 16:00,2012-06-25 08:00,2012-06-26 16:00,2012-06-25 08:00,2012-06-26 16:00,,2013-04-22 08:00,2013-04-23 16:00,,PT_Normal,,,,,PyBx2pif+UOhuKBYq9C0Rg,iKP7vyvUVkGYjFWGXsYtWw,,,N,0,0,,,2012-06-19 11:46,2012-06-20 09:59,admin,admin,,,
336,82594,773,10470,849,1,0,N,N,N,CP_Drtn,TT_Task,DT_FixedDUR2,RV_OK,TK_NotStart,4229PEB80,L.C issued by Gupco,,1640,0,40,0,0,0,40,0,0,0,,,,2013-05-08 08:00,2013-05-14 16:00,,2012-07-11 08:00,2012-07-17 16:00,2012-07-11 08:00,2012-07-17 16:00,2012-07-11 08:00,2012-07-17 16:00,,2013-05-08 08:00,2013-05-14 16:00,,PT_Normal,,,,,fi2xJ/kJV0CEShiAElJzWQ,/xqtBKQ3QEuTmEP+B+vEag,,,N,0,0,,,2012-06-19 11:46,2012-06-20 09:59,admin,admin,,,
337,82595,773,10470,849,1,100,N,N,N,CP_Drtn,TT_Task,DT_FixedDUR2,RV_OK,TK_Complete,4229PEB10,Issue RFQ for Electrical bulk,,,,0,0,0,0,16,0,0,0,,2011-12-28 00:00,2011-12-29 00:00,2013-03-31 08:00,2013-03-31 08:00,,2012-06-02 00:00,2012-06-02 00:00,,,2012-01-11 08:00,2012-01-12 16:00,,,,,PT_Normal,,,,,f5EaGSex3Uqa7NHrtGDRhA,PapX/E/5VEedYgMn9pW1WA,,,N,0,0,,,2012-06-19 11:46,2012-06-20 10:09,admin,admin,,,
338,82596,773,10470,850,1,100,N,N,N,CP_Drtn,TT_Task,DT_FixedDUR2,RV_OK,TK_Complete,4229PEB20,Bidding for Electrical bulk,,,,0,0,0,0,200,0,0,0,,2011-12-30 00:00,2012-02-01 00:00,2013-03-31 08:00,2013-03-31 08:00,,2012-06-02 00:00,2012-06-02 00:00,,,2012-01-13 08:00,2012-02-07 16:00,,,,,PT_Normal,,,,,lTyvNAcQH06R6RGuIBDIPA,WAPraHdgpEiuGrgnPTRw+A,,,N,0,0,,,2012-06-19 11:46,2012-06-20 10:09,admin,admin,,,
339,82597,773,10470,849,1,0,N,N,N,CP_Drtn,TT_Task,DT_FixedDUR2,RV_OK,TK_NotStart,4229PEB40,commercial evaluation & bid committee for Electrical bulk,,1640,0,80,0,0,0,80,0,0,0,,,,2013-04-08 08:00,2013-04-21 16:00,,2012-06-11 08:00,2012-06-24 16:00,2012-06-11 08:00,2012-06-24 16:00,2012-06-11 08:00,2012-06-24 16:00,,2013-04-08 08:00,2013-04-21 16:00,,PT_Normal,,,,,/1dJUbMyj0+6/2rBDgCT6Q,e/V43NRVMUS133iTAw1J2Q,,,N,0,0,,,2012-06-19 11:46,2012-06-20 09:59,admin,admin,,,
340,82598,773,10470,849,1,0,N,N,N,CP_Drtn,TT_Task,DT_FixedDUR2,RV_OK,TK_NotStart,4229PEB60,F.O.C for Electrical bulk,,1640,0,24,0,0,0,24,0,0,0,,,,2013-04-24 08:00,2013-04-28 16:00,,2012-06-27 08:00,2012-07-01 16:00,2012-06-27 08:00,2012-07-01 16:00,2012-06-27 08:00,2012-07-01 16:00,,2013-04-24 08:00,2013-04-28 16:00,,PT_Normal,,,,,Lz5fJ+NUlUe8A+2QzSnunQ,4AXOah8HAEeGpjijEBPUrg,,,N,0,0,,,2012-06-19 11:46,2012-06-20 09:59,admin,admin,,,
341,82599,773,10470,849,1,0,N,N,N,CP_Drtn,TT_Task,DT_FixedDUR2,RV_OK,TK_NotStart,4229PEB70,P.O for Electrical bulk,,1640,0,16,0,0,0,16,0,0,0,,,,2013-05-06 08:00,2013-05-07 16:00,,2012-07-09 08:00,2012-07-10 16:00,2012-07-09 08:00,2012-07-10 16:00,2012-07-09 08:00,2012-07-10 16:00,,2013-05-06 08:00,2013-05-07 16:00,,PT_Normal,,,,,+yIDx3bpTk2b0kDxMIXV0Q,AvajsHLxjEGyyQn6kYuXCQ,,,N,0,0,,,2012-06-19 11:46,2012-06-20 09:59,admin,admin,,,
342,82600,773,10470,849,1,0,N,N,N,CP_Drtn,TT_LOE,DT_FixedDUR2,RV_OK,TK_Active,4229EEL310,T.E.R for Electrical bulk,,1640,0,8,0,0,0,120,0,0,0,,2012-02-02 00:00,,2012-02-02 08:00,2013-03-31 16:00,,2012-06-03 08:00,2012-06-03 16:00,2012-06-03 08:00,2012-06-03 16:00,2012-03-05 08:00,2012-03-25 16:00,,2012-02-02 08:00,2013-03-31 16:00,,PT_Normal,,,,,LQoBsd6jbkmMA1LuWw5bBA,zLLzeS/iI0W7cqmCLSb03g,,,N,0,0,,,2012-06-19 11:46,2012-06-20 10:09,admin,admin,,,
343,82601,773,10470,849,1,0,N,N,N,CP_Drtn,TT_LOE,DT_FixedDUR2,RV_OK,TK_NotStart,A1440,MRP for Electrical bulk,,1640,0,40,0,0,0,40,0,0,0,,,,2013-04-29 08:00,2013-05-05 16:00,,2012-07-02 08:00,2012-07-08 16:00,2012-07-02 08:00,2012-07-08 16:00,2012-07-02 08:00,2012-07-08 16:00,,2013-04-29 08:00,2013-05-05 16:00,,PT_Normal,,,,,ZQacnJUtrEaOKpJWnaDS1w,cKQxE56q/ESdNlpuAltyIQ,,,N,0,0,,,2012-06-19 11:46,2012-06-20 10:09,admin,admin,,,
344,82602,773,10471,849,1,0,N,N,N,CP_Drtn,TT_Task,DT_FixedDUR2,RV_OK,TK_NotStart,4229PIB1020,Receive revised commercial offers,,1728,0,40,0,0,0,40,0,0,0,,,,2013-04-16 08:00,2013-04-22 16:00,,2012-06-04 08:00,2012-06-10 16:00,2012-06-04 08:00,2012-06-10 16:00,2012-06-04 08:00,2012-06-10 16:00,,2013-04-16 08:00,2013-04-22 16:00,,PT_Normal,,,,,/wp8xYceV0SZB/6d2BNUxw,AYPNiDXaKE6RLh7mqlxUcQ,,,N,0,0,,,2012-06-19 11:46,2012-06-20 09:59,admin,admin,,,
345,82603,773,10471,849,1,0,N,N,N,CP_Drtn,TT_Task,DT_FixedDUR2,RV_OK,TK_NotStart,4229PIB1040,Client approval on bid committee reccomendation,,1728,0,16,0,0,0,16,0,0,0,,,,2013-05-07 08:00,2013-05-08 16:00,,2012-06-25 08:00,2012-06-26 16:00,2012-06-25 08:00,2012-06-26 16:00,2012-06-25 08:00,2012-06-26 16:00,,2013-05-07 08:00,2013-05-08 16:00,,PT_Normal,,,,,NX55XTnpPUq7bqrhfOnY7g,okMlSxQPlUu8ymqN/KtiYQ,,,N,0,0,,,2012-06-19 11:46,2012-06-20 09:59,admin,admin,,,
346,82604,773,10471,849,1,0,N,N,N,CP_Drtn,TT_Task,DT_FixedDUR2,RV_OK,TK_NotStart,4229PIB1070,L.C issued by Gupco,,1728,0,40,0,0,0,40,0,0,0,,,,2013-05-23 08:00,2013-05-29 16:00,,2012-07-11 08:00,2012-07-17 16:00,2012-07-11 08:00,2012-07-17 16:00,2012-07-11 08:00,2012-07-17 16:00,,2013-05-23 08:00,2013-05-29 16:00,,PT_Normal,,,,,8wYfruSJXEy/VRn9rULpHA,8XeEO//CcEKYVr5WUWm1nw,,,N,0,0,,,2012-06-19 11:46,2012-06-20 09:59,admin,admin,,,
347,82605,773,10471,850,1,0,N,N,N,CP_Drtn,TT_Task,DT_FixedDUR2,RV_OK,TK_NotStart,4229PIB1080,Fabrication upto R.F.S,,2432,0,720,0,0,0,720,0,0,0,,,,2013-05-30 08:00,2013-08-27 16:00,,2012-07-18 08:00,2012-10-27 16:00,2012-07-18 08:00,2012-10-27 16:00,2012-07-18 08:00,2012-10-27 16:00,,2013-05-30 08:00,2013-08-27 16:00,,PT_Normal,,,,,E45xdaMYo0S4WhqdIR+sJg,,,,N,0,0,,,2012-06-19 11:46,2012-06-20 09:59,admin,admin,,,
348,82606,773,10471,851,1,0,N,N,N,CP_Drtn,TT_Task,DT_FixedDUR2,RV_OK,TK_NotStart,4229PIB1090,Delivery upto site,,2448,424,240,0,0,0,240,0,0,0,,,,2013-08-28 08:00,2013-09-26 16:00,,2012-10-28 08:00,2012-11-26 16:00,2012-10-28 08:00,2012-11-26 16:00,2012-10-28 08:00,2012-11-26 16:00,,2013-08-28 08:00,2013-09-26 16:00,,PT_Normal,,,,,5W/+95lx30aEdkuAu0MnvA,,,,N,0,0,,,2012-06-19 11:46,2012-06-20 09:59,admin,admin,,,
349,82607,773,10471,849,1,100,N,N,N,CP_Drtn,TT_Task,DT_FixedDUR2,RV_OK,TK_Complete,4229PIB1000,Issue RFQ for Instrument electrical bulk,,,,0,0,0,0,8,0,0,0,,2012-02-29 00:00,2012-03-04 00:00,2013-04-15 08:00,2013-04-15 08:00,,2012-06-02 00:00,2012-06-02 00:00,,,2012-02-13 08:00,2012-02-13 16:00,,,,,PT_Normal,,,,,YMOVVqX3UEa8lhPY+4FKXw,JI5SVA605USWDWBKpsEVTw,,,N,0,0,,,2012-06-19 11:46,2012-06-20 10:09,admin,admin,,,
350,82608,773,10471,850,1,100,N,N,N,CP_Drtn,TT_Task,DT_FixedDUR2,RV_OK,TK_Complete,4229PIB1010,Bidding for Instrument electrical bulk,,,,0,0,0,0,200,0,0,0,,2012-03-05 00:00,2012-03-26 00:00,2013-04-15 08:00,2013-04-15 08:00,,2012-06-02 00:00,2012-06-02 00:00,,,2012-03-31 08:00,2012-04-24 16:00,,,,,PT_Normal,,,,,hkABKUqQ8kWwzMGEhBeGOw,9MnOz/vVdkC9ctNWH2r8qg,,,N,0,0,,,2012-06-19 11:46,2012-06-20 10:09,admin,admin,,,
351,82609,773,10471,849,1,0,N,N,N,CP_Drtn,TT_Task,DT_FixedDUR2,RV_OK,TK_NotStart,4229PIB1030,commercial evaluation & bid committee for Instrument electrical bulk,,1728,0,80,0,0,0,80,0,0,0,,,,2013-04-23 08:00,2013-05-06 16:00,,2012-06-11 08:00,2012-06-24 16:00,2012-06-11 08:00,2012-06-24 16:00,2012-06-11 08:00,2012-06-24 16:00,,2013-04-23 08:00,2013-05-06 16:00,,PT_Normal,,,,,JOjL7w6Uc0apOjA71dPH5Q,HB71H4gGzEi8k5nywomlQQ,,,N,0,0,,,2012-06-19 11:46,2012-06-20 09:59,admin,admin,,,
352,82610,773,10471,849,1,0,N,N,N,CP_Drtn,TT_Task,DT_FixedDUR2,RV_OK,TK_NotStart,4229PIB1050,F.O.C for Instrument electrical bulk,,1728,0,24,0,0,0,24,0,0,0,,,,2013-05-09 08:00,2013-05-13 16:00,,2012-06-27 08:00,2012-07-01 16:00,2012-06-27 08:00,2012-07-01 16:00,2012-06-27 08:00,2012-07-01 16:00,,2013-05-09 08:00,2013-05-13 16:00,,PT_Normal,,,,,t0Z9PK5uV0qQ4o+VigLQ+g,FKG5q0XubUmv7n25cBnM+A,,,N,0,0,,,2012-06-19 11:46,2012-06-20 09:59,admin,admin,,,
353,82611,773,10471,849,1,0,N,N,N,CP_Drtn,TT_Task,DT_FixedDUR2,RV_OK,TK_NotStart,4229PIB1060,P.O for Instrument electrical bulk,,1728,0,16,0,0,0,16,0,0,0,,,,2013-05-21 08:00,2013-05-22 16:00,,2012-07-09 08:00,2012-07-10 16:00,2012-07-09 08:00,2012-07-10 16:00,2012-07-09 08:00,2012-07-10 16:00,,2013-05-21 08:00,2013-05-22 16:00,,PT_Normal,,,,,DySRaNUqrEGEtuy34mewNg,3CKBmFUDZUiNIm/ll8DEwg,,,N,0,0,,,2012-06-19 11:46,2012-06-20 09:59,admin,admin,,,
354,82612,773,10471,849,1,0,N,N,N,CP_Drtn,TT_LOE,DT_FixedDUR2,RV_OK,TK_Active,A1300,T.E.R for Instrument electrical bulk,,1728,0,8,0,0,0,120,0,0,0,,2012-03-26 00:00,,2012-03-26 08:00,2013-04-15 16:00,,2012-06-03 08:00,2012-06-03 16:00,2012-06-03 08:00,2012-06-03 16:00,2012-04-25 08:00,2012-05-15 16:00,,2012-03-26 08:00,2013-04-15 16:00,,PT_Normal,,,,,kHnmSRWBaU2J/RVrgbg+4w,vrPHaFUofUCwSCVvqK7yeg,,,N,0,0,,,2012-06-19 11:46,2012-06-20 10:09,admin,admin,,,
355,82613,773,10471,849,1,0,N,N,N,CP_Drtn,TT_LOE,DT_FixedDUR2,RV_OK,TK_NotStart,A1520,MRP for Instrument electrical bulk,,1728,0,40,0,0,0,40,0,0,0,,,,2013-05-14 08:00,2013-05-20 16:00,,2012-07-02 08:00,2012-07-08 16:00,2012-07-02 08:00,2012-07-08 16:00,2012-07-02 08:00,2012-07-08 16:00,,2013-05-14 08:00,2013-05-20 16:00,,PT_Normal,,,,,YRWjWROcUk2olMR4LUzV0Q,u5tHcOB7wkGarPuA3vE6Rw,,,N,0,0,,,2012-06-19 11:46,2012-06-20 10:09,admin,admin,,,
356,82614,773,10472,849,1,100,N,N,N,CP_Drtn,TT_Task,DT_FixedDUR2,RV_OK,TK_Complete,4229PIB60,F.O.C for Instrument mechanical bulk,,,,0,0,0,0,24,0,0,0,,2012-05-31 00:00,2012-05-31 00:00,2013-08-15 08:00,2013-08-15 08:00,,2012-06-02 00:00,2012-06-02 00:00,,,2012-06-26 08:00,2012-06-28 16:00,,,,,PT_Normal,,,,,7I14BtN0REWiJWWoxmrwog,wvJHlYKuYEiMge3zEAW6dQ,,,N,0,0,,,2012-06-19 11:46,2012-06-20 10:09,admin,admin,,,
357,82615,773,10472,849,1,100,N,N,N,CP_Drtn,TT_Task,DT_FixedDUR2,RV_OK,TK_Complete,4229PIB70,P.O for Instrument mechanical bulk,,,,0,0,0,0,16,0,0,0,,2012-05-31 00:00,2012-05-31 00:00,2013-08-15 08:00,2013-08-15 08:00,,2012-06-02 00:00,2012-06-02 00:00,,,2012-07-01 08:00,2012-07-02 16:00,,,,,PT_Normal,,,,,WYuxKgG6MUCxxh8HBw5GjA,hWfotYgdCUObagj6utqawQ,,,N,0,0,,,2012-06-19 11:46,2012-06-20 10:09,admin,admin,,,
358,82616,773,10472,850,1,100,N,N,N,CP_Drtn,TT_Task,DT_FixedDUR2,RV_OK,TK_Complete,4229PIB90,Fabrication upto R.F.S,,,,0,0,0,0,720,0,0,0,,2012-05-31 00:00,2012-05-31 00:00,2013-08-15 08:00,2013-08-15 08:00,,2012-06-02 00:00,2012-06-02 00:00,,,2012-07-10 08:00,2012-10-19 16:00,,,,,PT_Normal,,,,,XyVJrhHyx0WF7w491sMOMg,7UQ9XmTabEqxyA7/76n9MA,,,N,0,0,,,2012-06-19 11:46,2012-06-20 10:09,admin,admin,,,
359,82617,773,10472,851,1,100,N,N,N,CP_Drtn,TT_Task,DT_FixedDUR2,RV_OK,TK_Complete,4229PIB100,Delivery upto site,,,,0,0,0,0,280,0,0,0,,2012-05-31 00:00,2012-05-31 00:00,2013-09-26 16:00,2013-09-26 16:00,,2012-06-02 00:00,2012-06-02 00:00,,,2012-10-20 08:00,2012-11-23 16:00,,,,,PT_Normal,,,,,DBqzuYENiEyR0Xt9thTGpA,Ed1rw6pVGkqfXjRfFT7JpQ,,,N,0,0,,,2012-06-19 11:46,2012-06-20 10:09,admin,admin,,,
360,82618,773,10472,849,1,100,N,N,N,CP_Drtn,TT_Task,DT_FixedDUR2,RV_OK,TK_Complete,4229PIB30,Receive revised commercial offers,,,,0,0,0,0,40,0,0,0,,2012-05-30 00:00,2012-05-30 00:00,2013-08-15 08:00,2013-08-15 08:00,,2012-06-02 00:00,2012-06-02 00:00,,,2012-06-03 08:00,2012-06-07 16:00,,,,,PT_Normal,,,,,WSTglqLff02eT+CgZTs1lg,AYPNiDXaKE6RLh7mqlxUcQ,,,N,0,0,,,2012-06-19 11:46,2012-06-20 10:09,admin,admin,,,
361,82619,773,10472,849,1,100,N,N,N,CP_Drtn,TT_Task,DT_FixedDUR2,RV_OK,TK_Complete,4229PIB50,Client approval on bid committee reccommendation,,,,0,0,0,0,16,0,0,0,,2012-05-31 00:00,2012-05-31 00:00,2013-08-15 08:00,2013-08-15 08:00,,2012-06-02 00:00,2012-06-02 00:00,,,2012-06-24 08:00,2012-06-25 16:00,,,,,PT_Normal,,,,,BJUc5dJ0dEOD+b4axFQC6Q,okMlSxQPlUu8ymqN/KtiYQ,,,N,0,0,,,2012-06-19 11:46,2012-06-20 10:09,admin,admin,,,
362,82620,773,10472,849,1,100,N,N,N,CP_Drtn,TT_Task,DT_FixedDUR2,RV_OK,TK_Complete,4229PIB80,L.C issued by Gupco,,,,0,0,0,0,40,0,0,0,,2012-05-31 00:00,2012-05-31 00:00,2013-08-15 08:00,2013-08-15 08:00,,2012-06-02 00:00,2012-06-02 00:00,,,2012-07-03 08:00,2012-07-09 16:00,,,,,PT_Normal,,,,,8v670X2vrUSYHWaSPBmFwA,8XeEO//CcEKYVr5WUWm1nw,,,N,0,0,,,2012-06-19 11:46,2012-06-20 10:09,admin,admin,,,
363,82621,773,10472,849,1,100,N,N,N,CP_Drtn,TT_Task,DT_FixedDUR2,RV_OK,TK_Complete,4229PIB10,Issue RFQ for Instrument mechanical bulk,,,,0,0,0,0,16,0,0,0,,2012-01-25 00:00,2012-02-21 00:00,2013-08-15 08:00,2013-08-15 08:00,,2012-06-02 00:00,2012-06-02 00:00,,,2012-02-13 08:00,2012-02-14 16:00,,,,,PT_Normal,,,,,7DB95U/Sc0itYa3YvAJlxA,OCnd8pP/p0aatV0O4h2pyA,,,N,0,0,,,2012-06-19 11:46,2012-06-20 10:09,admin,admin,,,
364,82622,773,10472,850,1,100,N,N,N,CP_Drtn,TT_Task,DT_FixedDUR2,RV_OK,TK_Complete,4229PIB20,Bidding for Instrument mechanical bulk,,,,0,0,0,0,144,0,0,0,,2012-02-22 00:00,2012-03-29 00:00,2013-08-15 08:00,2013-08-15 08:00,,2012-06-02 00:00,2012-06-02 00:00,,,2012-03-03 08:00,2012-03-20 16:00,,,,,PT_Normal,,,,,iA7/R+FUmUmmF0YTZQZGww,Qw2K70fh0Uyvygb6Wxm90Q,,,N,0,0,,,2012-06-19 11:46,2012-06-20 10:09,admin,admin,,,
365,82623,773,10472,849,1,100,N,N,N,CP_Drtn,TT_Task,DT_FixedDUR2,RV_OK,TK_Complete,4229PIB40,commercial evaluation & bid committee for Instrument mechanical bulk,,,,0,0,0,0,80,0,0,0,,2012-05-31 00:00,2012-05-31 00:00,2013-08-15 08:00,2013-08-15 08:00,,2012-06-02 00:00,2012-06-02 00:00,,,2012-06-10 08:00,2012-06-21 16:00,,,,,PT_Normal,,,,,dPPPW6xXkkqpKaDnSBmmvQ,YJ2YdK0gtkq3MSsnZFqeCg,,,N,0,0,,,2012-06-19 11:46,2012-06-20 10:09,admin,admin,,,
366,82624,773,10472,849,1,100,N,N,N,CP_Drtn,TT_LOE,DT_FixedDUR2,RV_OK,TK_Complete,A1250,T.E.R for Instrument  Mechanical bulk,,,,0,0,0,0,120,0,0,0,,2012-03-27 00:00,2012-03-27 00:00,,,,,,,,2012-04-01 08:00,2012-04-19 16:00,,,,,PT_Normal,,,,,zNI35qhvlEWNo/rm+7W4zA,GZpEktvPQkCIPEkPnxCk+g,,,N,0,0,,,2012-06-19 11:46,2012-06-19 11:46,admin,admin,,,
367,82625,773,10472,849,1,100,N,N,N,CP_Drtn,TT_LOE,DT_FixedDUR2,RV_OK,TK_Complete,A1510,MRP for Instrument Mechanical bulk,,,,0,0,0,0,8,0,0,0,,2012-05-31 00:00,2012-05-31 16:00,,,,,,,,2012-05-31 08:00,2012-05-31 16:00,,,,,PT_Normal,,,,,CF6Dm/zrVUeIg5/peYfjRQ,Eo245czxY0mc5Pbd3SnqwA,,,N,0,0,,,2012-06-19 11:46,2012-06-19 11:46,admin,admin,,,
368,82626,773,10473,849,1,0,N,N,N,CP_Drtn,TT_Task,DT_FixedDUR2,RV_OK,TK_NotStart,4229PFI60,F.O.C for field Instrument,,1576,0,24,0,0,0,24,0,0,0,,,,2013-04-04 08:00,2013-04-08 16:00,,2012-06-19 08:00,2012-06-21 16:00,2012-06-19 08:00,2012-06-21 16:00,2012-06-19 08:00,2012-06-21 16:00,,2013-04-04 08:00,2013-04-08 16:00,,PT_Normal,,,,,aeJJAQtzxkOK0vszI5s2Cg,4AXOah8HAEeGpjijEBPUrg,,,N,0,0,,,2012-06-19 11:46,2012-06-20 09:59,admin,admin,,,
369,82627,773,10473,849,1,0,N,N,N,CP_Drtn,TT_Task,DT_FixedDUR2,RV_OK,TK_NotStart,4229PFI70,P.O for field Instrument,,1576,0,16,0,0,0,16,0,0,0,,,,2013-04-16 08:00,2013-04-17 16:00,,2012-07-01 08:00,2012-07-02 16:00,2012-07-01 08:00,2012-07-02 16:00,2012-07-01 08:00,2012-07-02 16:00,,2013-04-16 08:00,2013-04-17 16:00,,PT_Normal,,,,,KsARZKEarE64egmoRm0/kw,AvajsHLxjEGyyQn6kYuXCQ,,,N,0,0,,,2012-06-19 11:46,2012-06-20 09:59,admin,admin,,,
370,82628,773,10473,849,1,100,N,N,N,CP_Drtn,TT_LOE,DT_FixedDUR2,RV_OK,TK_Complete,A1260,T.E.R for field Instrument,,,,0,0,0,0,80,0,0,0,,2012-01-17 08:00,2012-05-02 16:00,,,,,,,,2012-01-17 08:00,2012-01-31 16:00,,,,,PT_Normal,,,,,DpJL9jtAQkSfQmWWRg5fiA,ct7xw1S//EaYd5hkrUDieg,,,N,0,0,,,2012-06-19 11:46,2012-06-19 11:46,admin,admin,,,
371,82629,773,10473,849,1,0,N,N,N,CP_Drtn,TT_LOE,DT_FixedDUR2,RV_OK,TK_NotStart,A1500,MRP for field Instrument,,1576,0,40,0,0,0,40,0,0,0,,,,2013-04-09 08:00,2013-04-15 16:00,,2012-06-24 08:00,2012-06-28 16:00,2012-06-24 08:00,2012-06-28 16:00,2012-06-24 08:00,2012-06-28 16:00,,2013-04-09 08:00,2013-04-15 16:00,,PT_Normal,,,,,wFewHl5t0U+WR4Uebzmmrw,dTXvLV4G8EqSCMWO1CBnLA,,,N,0,0,,,2012-06-19 11:46,2012-06-20 10:09,admin,admin,,,
372,82630,773,10473,850,1,0,N,N,N,CP_Drtn,TT_Task,DT_FixedDUR2,RV_OK,TK_NotStart,4229PFI90,Fabrication upto R.F.S,,2216,0,960,0,0,0,960,0,0,0,,,,2013-04-25 08:00,2013-08-22 16:00,,2012-07-10 08:00,2012-11-18 16:00,2012-07-10 08:00,2012-11-18 16:00,2012-07-10 08:00,2012-11-18 16:00,,2013-04-25 08:00,2013-08-22 16:00,,PT_Normal,,,,,d25F6NKizEy/ULhaSFo4eg,7UQ9XmTabEqxyA7/76n9MA,,,N,0,0,,,2012-06-19 11:46,2012-06-20 09:59,admin,admin,,,
373,82631,773,10473,851,1,0,N,N,N,CP_Drtn,TT_Task,DT_FixedDUR2,RV_OK,TK_NotStart,4229PFI100,Delivery upto site,,2232,208,280,0,0,0,280,0,0,0,,,,2013-08-23 08:00,2013-09-26 16:00,,2012-11-19 08:00,2012-12-23 16:00,2012-11-19 08:00,2012-12-23 16:00,2012-11-19 08:00,2012-12-23 16:00,,2013-08-23 08:00,2013-09-26 16:00,,PT_Normal,,,,,LUK4kC0G6UyJAM+TDgNd+g,Ed1rw6pVGkqfXjRfFT7JpQ,,,N,0,0,,,2012-06-19 11:46,2012-06-20 09:59,admin,admin,,,
374,82632,773,10473,849,1,0,N,N,N,CP_Drtn,TT_Task,DT_FixedDUR2,RV_OK,TK_Active,4229PFI30,Receive revised commercial offers,,1576,0,0,0,0,0,40,0,0,0,,2012-05-03 00:00,,2013-03-18 16:00,2013-03-18 16:00,2012-05-10 16:00,2012-06-03 08:00,2012-06-03 08:00,2012-06-03 08:00,2012-06-03 08:00,2012-04-29 08:00,2012-05-03 16:00,,2013-03-18 16:00,2013-03-18 16:00,,PT_Normal,,,,,plOyahHsl0OGcK5QKBLFzg,AYPNiDXaKE6RLh7mqlxUcQ,,,N,0,0,,,2012-06-19 11:46,2012-06-20 09:59,admin,admin,,,
375,82633,773,10473,849,1,0,N,N,N,CP_Drtn,TT_Task,DT_FixedDUR2,RV_OK,TK_NotStart,4229PFI50,Client approval on bid committee reccomendation,,1576,0,16,0,0,0,16,0,0,0,,,,2013-04-02 08:00,2013-04-03 16:00,,2012-06-17 08:00,2012-06-18 16:00,2012-06-17 08:00,2012-06-18 16:00,2012-06-17 08:00,2012-06-18 16:00,,2013-04-02 08:00,2013-04-03 16:00,,PT_Normal,,,,,V2YkbD4kxE+Nf9QN05HVxQ,okMlSxQPlUu8ymqN/KtiYQ,,,N,0,0,,,2012-06-19 11:46,2012-06-20 09:59,admin,admin,,,
376,82634,773,10473,849,1,0,N,N,N,CP_Drtn,TT_Task,DT_FixedDUR2,RV_OK,TK_NotStart,4229PFI80,L.C issued by Gupco,,1576,0,40,0,0,0,40,0,0,0,,,,2013-04-18 08:00,2013-04-24 16:00,,2012-07-03 08:00,2012-07-09 16:00,2012-07-03 08:00,2012-07-09 16:00,2012-07-03 08:00,2012-07-09 16:00,,2013-04-18 08:00,2013-04-24 16:00,,PT_Normal,,,,,eDTstrJFS0ut9XvIfiplYQ,8XeEO//CcEKYVr5WUWm1nw,,,N,0,0,,,2012-06-19 11:46,2012-06-20 09:59,admin,admin,,,
377,82635,773,10473,849,1,100,N,N,N,CP_Drtn,TT_Task,DT_FixedDUR2,RV_OK,TK_Complete,4229PFI10,Issue RFQ for Field Instrument,,,,0,0,0,0,8,0,0,0,,2011-12-13 00:00,2011-12-14 00:00,2013-03-18 16:00,2013-03-18 16:00,,2012-06-02 00:00,2012-06-02 00:00,,,2012-01-01 08:00,2012-01-01 16:00,,,,,PT_Normal,,,,,a/OKEe2jpUyS5au1ZltN5A,PapX/E/5VEedYgMn9pW1WA,,,N,0,0,,,2012-06-19 11:46,2012-06-20 10:09,admin,admin,,,
378,82636,773,10473,850,1,100,N,N,N,CP_Drtn,TT_Task,DT_FixedDUR2,RV_OK,TK_Complete,4229PFI20,Bidding for field Instrument,,,,0,0,0,0,168,0,0,0,,2011-12-15 00:00,2012-01-12 16:00,2013-03-18 16:00,2013-03-18 16:00,,2012-06-02 00:00,2012-06-02 00:00,,,2011-12-31 08:00,2012-01-28 16:00,,,,,PT_Normal,,,,,5CdNbbKR8k+hpOu5Zacx9Q,WAPraHdgpEiuGrgnPTRw+A,,,N,0,0,,,2012-06-19 11:46,2012-06-20 10:09,admin,admin,,,
379,82637,773,10473,849,1,0,N,N,N,CP_Drtn,TT_Task,DT_FixedDUR2,RV_OK,TK_NotStart,4229PFI40,commercial evaluation & bid committee for field Instrument,,1576,0,80,0,0,0,80,0,0,0,,,,2013-03-19 08:00,2013-04-01 16:00,,2012-06-03 08:00,2012-06-14 16:00,2012-06-03 08:00,2012-06-14 16:00,2012-06-03 08:00,2012-06-14 16:00,,2013-03-19 08:00,2013-04-01 16:00,,PT_Normal,,,,,OGdUaR2GuUy6ga32tj4iMA,e/V43NRVMUS133iTAw1J2Q,,,N,0,0,,,2012-06-19 11:46,2012-06-20 09:59,admin,admin,,,
380,82638,773,10474,850,1,0,N,N,N,CP_Drtn,TT_Task,DT_FixedDUR2,RV_OK,TK_NotStart,4229PCV90,Fabrication upto R.F.S,,2392,0,696,0,0,0,696,0,0,0,,,,2013-04-26 08:00,2013-07-21 16:00,2012-09-25 16:00,2012-06-19 08:00,2012-09-25 16:00,2012-06-19 08:00,2012-09-25 16:00,2012-06-19 08:00,2012-09-25 16:00,,2013-04-26 08:00,2013-07-21 16:00,,PT_Normal,,,,,WKooVUWFQEGvHjVs7gSsPw,7UQ9XmTabEqxyA7/76n9MA,,,N,0,0,,,2012-06-19 11:46,2012-06-20 09:59,admin,admin,,,
381,82639,773,10474,851,1,0,N,N,N,CP_Drtn,TT_Task,DT_FixedDUR2,RV_OK,TK_NotStart,4229PCV100,Delivery upto site,,2664,1072,280,0,0,0,280,0,0,0,,,,2013-08-23 08:00,2013-09-26 16:00,,2012-09-26 08:00,2012-10-30 16:00,2012-09-26 08:00,2012-10-30 16:00,2012-09-26 08:00,2012-10-30 16:00,,2013-08-23 08:00,2013-09-26 16:00,,PT_Normal,,,,,j16q+08r6kWjebfH7bf3rg,Ed1rw6pVGkqfXjRfFT7JpQ,,,N,0,0,,,2012-06-19 11:46,2012-06-20 09:59,admin,admin,,,
382,82640,773,10474,849,1,100,N,N,N,CP_Drtn,TT_Task,DT_FixedDUR2,RV_OK,TK_Complete,4229PCV30,Receive revised commercial offers,,,,0,0,0,0,40,0,0,0,,2012-04-10 00:00,2012-04-26 00:00,2013-01-20 16:00,2013-01-20 16:00,,2012-06-02 00:00,2012-06-02 00:00,,,2012-04-01 08:00,2012-04-05 16:00,,,,,PT_Normal,,,,,+ThSY5OmvUGnbuwGA8QqdA,AYPNiDXaKE6RLh7mqlxUcQ,,,N,0,0,,,2012-06-19 11:46,2012-06-20 10:09,admin,admin,,,
383,82641,773,10474,849,1,100,N,N,N,CP_Drtn,TT_Task,DT_FixedDUR2,RV_OK,TK_Complete,4229PCV50,Client approval on bid committee reccomendation,,,,0,0,0,0,16,0,0,0,,2012-05-13 08:00,2012-05-17 00:00,2013-01-20 16:00,2013-01-20 16:00,,2012-06-02 00:00,2012-06-02 00:00,,,2012-05-13 08:00,2012-05-14 16:00,,,,,PT_Normal,,,,,WtROXkvBo0+LVCWSxlWmUg,okMlSxQPlUu8ymqN/KtiYQ,,,N,0,0,,,2012-06-19 11:46,2012-06-20 10:09,admin,admin,,,
384,82642,773,10474,849,1,0,N,N,N,CP_Drtn,TT_Task,DT_FixedDUR2,RV_OK,TK_NotStart,4229PCV80,L.C issued by Gupco,,1704,0,40,0,0,0,40,0,0,0,,,,2013-04-21 08:00,2013-04-25 16:00,,2012-06-12 08:00,2012-06-18 16:00,2012-06-12 08:00,2012-06-18 16:00,2012-06-12 08:00,2012-06-18 16:00,,2013-04-21 08:00,2013-04-25 16:00,,PT_Normal,,,,,yEbJIqBYsEmSjw4CHUkh8Q,8XeEO//CcEKYVr5WUWm1nw,,,N,0,0,,,2012-06-19 11:46,2012-06-20 09:59,admin,admin,,,
385,82643,773,10474,849,1,100,N,N,N,CP_Drtn,TT_Task,DT_FixedDUR2,RV_OK,TK_Complete,4229PCV10,Issue RFQ for Choke valves,,,,0,0,0,0,16,0,0,0,,2011-11-24 00:00,2011-11-24 00:00,2013-01-20 16:00,2013-01-20 16:00,,2012-06-02 00:00,2012-06-02 00:00,,,2011-12-04 08:00,2011-12-05 16:00,,,,,PT_Normal,,,,,CuDIm/lu8U2Wi6HiwBoAQA,PapX/E/5VEedYgMn9pW1WA,,,N,0,0,,,2012-06-19 11:46,2012-06-20 10:09,admin,admin,,,
386,82644,773,10474,850,1,100,N,N,N,CP_Drtn,TT_Task,DT_FixedDUR2,RV_OK,TK_Complete,4229PCV20,Bidding for Choke valves,,,,0,0,0,0,240,0,0,0,,2011-11-25 00:00,2011-12-26 00:00,2013-01-20 16:00,2013-01-20 16:00,,2012-06-02 00:00,2012-06-02 00:00,,,2011-12-06 08:00,2012-01-16 16:00,,,,,PT_Normal,,,,,zjNQdggTAUGQC61W2tjrPw,WAPraHdgpEiuGrgnPTRw+A,,,N,0,0,,,2012-06-19 11:46,2012-06-20 10:09,admin,admin,,,
387,82645,773,10474,849,1,100,N,N,N,CP_Drtn,TT_Task,DT_FixedDUR2,RV_OK,TK_Complete,4229PCV40,commercial evaluation & bid committee for Choke valves,,,,0,0,0,0,80,0,0,0,,2012-04-29 08:00,2012-05-13 16:00,2013-01-20 16:00,2013-01-20 16:00,,2012-06-02 00:00,2012-06-02 00:00,,,2012-04-29 08:00,2012-05-10 16:00,,,,,PT_Normal,,,,,98pf3zoIkEOoZaqPQC4+fQ,e/V43NRVMUS133iTAw1J2Q,,,N,0,0,,,2012-06-19 11:46,2012-06-20 10:09,admin,admin,,,
388,82646,773,10474,849,1,0,N,N,N,CP_Drtn,TT_Task,DT_FixedDUR2,RV_OK,TK_Active,4229PCV60,F.O.C for Choke valves,,1248,0,0,0,0,0,24,0,0,0,,2012-05-17 00:00,,2013-01-20 16:00,2013-01-20 16:00,2012-05-31 16:00,2012-06-03 08:00,2012-06-03 08:00,2012-06-03 08:00,2012-06-03 08:00,2012-04-29 08:00,2012-05-01 16:00,,2013-01-20 16:00,2013-01-20 16:00,,PT_Normal,,,,,0noK7DU4HUuOT7dvPkwQCw,4AXOah8HAEeGpjijEBPUrg,,,N,0,0,,,2012-06-19 11:46,2012-06-20 09:59,admin,admin,,,
389,82647,773,10474,849,1,0,N,N,N,CP_Drtn,TT_Task,DT_FixedDUR2,RV_OK,TK_NotStart,4229PCV70,P.O for Choke valves,,1704,0,40,0,0,0,40,0,0,0,,,,2013-04-14 08:00,2013-04-18 16:00,,2012-06-05 08:00,2012-06-11 16:00,2012-06-05 08:00,2012-06-11 16:00,2012-06-05 08:00,2012-06-11 16:00,,2013-04-14 08:00,2013-04-18 16:00,,PT_Normal,,,,,4hYZgilBt0q3wzv2PWJojw,AvajsHLxjEGyyQn6kYuXCQ,,,N,0,0,,,2012-06-19 11:46,2012-06-20 09:59,admin,admin,,,
390,82648,773,10474,849,1,100,N,N,N,CP_Drtn,TT_LOE,DT_FixedDUR2,RV_OK,TK_Complete,A1280,T.E.R for choke valves,,,,0,0,0,0,160,0,0,0,,2011-12-27 00:00,2012-04-02 00:00,,,,,,,,2012-01-01 08:00,2012-01-29 16:00,,,,,PT_Normal,,,,,Hbz9eOlLgki80+RWHCbRbA,iXh9gte5aEazCHzhI0fQ8w,,,N,0,0,,,2012-06-19 11:46,2012-06-19 11:46,admin,admin,,,
391,82649,773,10474,849,1,0,N,N,N,CP_Drtn,TT_LOE,DT_FixedDUR2,RV_OK,TK_Active,A1480,MRP for Choke valves,,1704,0,16,0,0,0,40,0,0,0,,2012-05-27 00:00,,2012-05-27 08:00,2013-04-11 16:00,,2012-06-03 08:00,2012-06-04 16:00,2012-06-03 08:00,2012-06-04 16:00,2012-06-03 08:00,2012-06-07 16:00,,2012-05-27 08:00,2013-04-11 16:00,,PT_Normal,,,,,aXsL0bCXoUSED7aHgo3HPw,NjzlulhbIUKcB6s3mpdNUA,,,N,0,0,,,2012-06-19 11:46,2012-06-20 10:09,admin,admin,,,
392,82650,773,10475,850,1,0,N,N,N,CP_Drtn,TT_Task,DT_FixedDUR2,RV_OK,TK_NotStart,4229PRV90,Fabrication upto R.F.S,,1720,0,1224,0,0,0,1224,0,0,0,,,,2013-01-21 08:00,2013-06-22 16:00,2012-11-19 16:00,2012-06-08 08:00,2012-11-19 16:00,2012-06-08 08:00,2012-11-19 16:00,2012-06-08 08:00,2012-11-19 16:00,,2013-01-21 08:00,2013-06-22 16:00,,PT_Normal,,,,,FnjH0Z7qa0KgsLd8CaUGHA,7UQ9XmTabEqxyA7/76n9MA,,,N,0,0,,,2012-06-19 11:46,2012-06-20 09:59,admin,admin,,,
393,82651,773,10475,851,1,0,N,N,N,CP_Drtn,TT_Task,DT_FixedDUR2,RV_OK,TK_NotStart,4229PRV100,Delivery upto site,,2264,240,240,0,0,0,240,0,0,0,,,,2013-08-28 08:00,2013-09-26 16:00,,2012-11-20 08:00,2012-12-19 16:00,2012-11-20 08:00,2012-12-19 16:00,2012-11-20 08:00,2012-12-19 16:00,,2013-08-28 08:00,2013-09-26 16:00,,PT_Normal,,,,,iD839WUtIUaP8VjJhkkEyg,Ed1rw6pVGkqfXjRfFT7JpQ,,,N,0,0,,,2012-06-19 11:46,2012-06-20 09:59,admin,admin,,,
394,82652,773,10475,849,1,100,N,N,N,CP_Drtn,TT_Task,DT_FixedDUR2,RV_OK,TK_Complete,4229PRV30,Receive revised commercial offers,,,,0,0,0,0,40,0,0,0,,2012-04-04 00:00,2012-04-15 00:00,2013-01-13 16:00,2013-01-13 16:00,,2012-06-02 00:00,2012-06-02 00:00,,,2012-04-01 08:00,2012-04-05 16:00,,,,,PT_Normal,,,,,06Z6pyJ4CE+Obp2uc3NirA,AYPNiDXaKE6RLh7mqlxUcQ,,,N,0,0,,,2012-06-19 11:46,2012-06-20 10:09,admin,admin,,,
395,82653,773,10475,849,1,100,N,N,N,CP_Drtn,TT_Task,DT_FixedDUR2,RV_OK,TK_Complete,4229PRV50,Client approval on bid committee reccommendation,,,,0,0,0,0,16,0,0,0,,2012-05-13 08:00,2012-05-14 16:00,2013-01-13 16:00,2013-01-13 16:00,,2012-06-02 00:00,2012-06-02 00:00,,,2012-05-13 08:00,2012-05-14 16:00,,,,,PT_Normal,,,,,PlJVgBe4K0+cUYOkjU03AQ,okMlSxQPlUu8ymqN/KtiYQ,,,N,0,0,,,2012-06-19 11:46,2012-06-20 10:09,admin,admin,,,
396,82654,773,10475,849,1,0,N,N,N,CP_Drtn,TT_Task,DT_FixedDUR2,RV_OK,TK_NotStart,4229PRV80,L.C issued by Gupco,,2616,2616,24,0,0,0,24,0,0,0,,,,2013-09-24 08:00,2013-09-26 16:00,,2012-06-10 08:00,2012-06-12 16:00,2012-06-10 08:00,2012-06-12 16:00,2012-06-10 08:00,2012-06-12 16:00,,2013-09-24 08:00,2013-09-26 16:00,,PT_Normal,,,,,IUVCysBWj0emaGhkcUy5nQ,8XeEO//CcEKYVr5WUWm1nw,,,N,0,0,,,2012-06-19 11:46,2012-06-20 09:59,admin,admin,,,
397,82655,773,10475,849,1,100,N,N,N,CP_Drtn,TT_Task,DT_FixedDUR2,RV_OK,TK_Complete,4229PRV10,Issue RFQ for pressure regulator valves,,,,0,0,0,0,16,0,0,0,,2011-10-06 00:00,2011-10-09 00:00,2013-01-13 16:00,2013-01-13 16:00,,2012-06-02 00:00,2012-06-02 00:00,,,2011-10-09 08:48,2011-10-11 08:48,,,,,PT_Normal,,,,,LE7eYPdIF022mOv51J8OQA,PapX/E/5VEedYgMn9pW1WA,,,N,0,0,,,2012-06-19 11:46,2012-06-20 10:09,admin,admin,,,
398,82656,773,10475,850,1,100,N,N,N,CP_Drtn,TT_Task,DT_FixedDUR2,RV_OK,TK_Complete,4229PRV20,Bidding for pressure regulator valves,,,,0,0,0,0,248,0,0,0,,2011-10-10 00:00,2012-02-01 00:00,2013-01-13 16:00,2013-01-13 16:00,,2012-06-02 00:00,2012-06-02 00:00,,,2011-10-11 08:48,2011-11-11 08:48,,,,,PT_Normal,,,,,sWhLtrw9A0yHINob44BSPA,WAPraHdgpEiuGrgnPTRw+A,,,N,0,0,,,2012-06-19 11:46,2012-06-20 10:09,admin,admin,,,
399,82657,773,10475,849,1,100,N,N,N,CP_Drtn,TT_Task,DT_FixedDUR2,RV_OK,TK_Complete,4229PRV40,Commercial evaluation & bid committee for pressure regulator valves,,,,0,0,0,0,80,0,0,0,,2012-04-17 00:00,2012-05-10 16:00,2013-01-13 16:00,2013-01-13 16:00,,2012-06-02 00:00,2012-06-02 00:00,,,2012-04-29 08:00,2012-05-10 16:00,,,,,PT_Normal,,,,,Nk8VAQGprkOgV1u7pUqRSQ,e/V43NRVMUS133iTAw1J2Q,,,N,0,0,,,2012-06-19 11:46,2012-06-20 10:09,admin,admin,,,
400,82658,773,10475,849,1,0,N,N,N,CP_Drtn,TT_Task,DT_FixedDUR2,RV_OK,TK_Active,4229PRV60,F.O.C for pressure regulator valves,,1208,0,0,0,0,0,16,0,0,0,,2012-05-15 08:00,,2013-01-13 16:00,2013-01-13 16:00,2012-05-31 16:00,2012-06-03 08:00,2012-06-03 08:00,2012-06-03 08:00,2012-06-03 08:00,2012-05-15 08:00,2012-05-16 16:00,,2013-01-13 16:00,2013-01-13 16:00,,PT_Normal,,,,,dl8jQIm6dEKyju1cBqs94Q,4AXOah8HAEeGpjijEBPUrg,,,N,0,0,,,2012-06-19 11:46,2012-06-20 09:59,admin,admin,,,
401,82659,773,10475,849,1,0,N,N,N,CP_Drtn,TT_Task,DT_FixedDUR2,RV_OK,TK_NotStart,4229PRV70,P.O for pressure regulator valves,,1208,0,16,0,0,0,16,0,0,0,,,,2013-01-17 08:00,2013-01-20 16:00,,2012-06-06 08:00,2012-06-07 16:00,2012-06-06 08:00,2012-06-07 16:00,2012-06-06 08:00,2012-06-07 16:00,,2013-01-17 08:00,2013-01-20 16:00,,PT_Normal,,,,,d9olpEJ4HUGh8xA3YXr18w,AvajsHLxjEGyyQn6kYuXCQ,,,N,0,0,,,2012-06-19 11:46,2012-06-20 09:59,admin,admin,,,
402,82660,773,10475,849,1,100,N,N,N,CP_Drtn,TT_LOE,DT_FixedDUR2,RV_OK,TK_Complete,A1290,T.E.R for  Pressure regulator valves,,,,0,0,0,0,120,0,0,0,,2012-02-02 00:00,2012-04-03 00:00,,,,,,,,2012-03-08 08:00,2012-03-28 16:00,,,,,PT_Normal,,,,,kk52uYsUH02FtFlfK6yA/g,N0GerPhz6kKoKX7oZlOJsw,,,N,0,0,,,2012-06-19 11:46,2012-06-19 11:46,admin,admin,,,
403,82661,773,10475,849,1,0,N,N,N,CP_Drtn,TT_LOE,DT_FixedDUR2,RV_OK,TK_Active,A1470,MRP for  pressure regulator valves,,1208,0,24,0,0,0,40,0,0,0,,2012-05-27 00:00,,2012-05-27 08:00,2013-01-16 16:00,,2012-06-03 08:00,2012-06-05 16:00,2012-06-03 08:00,2012-06-05 16:00,2012-06-03 08:00,2012-06-07 16:00,,2012-05-27 08:00,2013-01-16 16:00,,PT_Normal,,,,,0o9O2yW6kkac2FHHRXFD3w,AwbIFp5LAk2PiImMFdUHFg,,,N,0,0,,,2012-06-19 11:46,2012-06-20 10:09,admin,admin,,,
404,82662,773,10476,849,1,100,N,N,N,CP_Drtn,TT_Task,DT_FixedDUR2,RV_OK,TK_Complete,4229PCI30,Receive revised commercial offers,,,,0,0,0,0,40,0,0,0,,2012-02-05 00:00,2012-02-27 00:00,2012-12-24 08:00,2012-12-24 08:00,,2012-06-02 00:00,2012-06-02 00:00,,,2012-03-25 08:00,2012-03-29 16:00,,,,,PT_Normal,,,,,8u//Mfsg2U6vastBKmhOMA,,,,N,0,0,,,2012-06-19 11:46,2012-06-20 10:09,admin,admin,,,
405,82663,773,10476,849,1,100,N,N,N,CP_Drtn,TT_Task,DT_FixedDUR2,RV_OK,TK_Complete,4229PCI50,Client approval on bid committee reccomendation,,,,0,0,0,0,16,0,0,0,,2012-03-13 08:00,2012-03-18 00:00,2012-12-24 08:00,2012-12-24 08:00,,2012-06-02 00:00,2012-06-02 00:00,,,2012-03-13 08:00,2012-03-14 16:00,,,,,PT_Normal,,,,,dLy48aFKUEqB87l5cMeRaQ,,,,N,0,0,,,2012-06-19 11:46,2012-06-20 10:09,admin,admin,,,
406,82664,773,10476,849,1,0,N,N,N,CP_Drtn,TT_Task,DT_FixedDUR2,RV_OK,TK_NotStart,4229PCI80,L.C issued by Gupco,,1088,0,40,0,0,0,40,0,0,0,,,,2012-12-24 08:00,2012-12-30 16:00,,2012-06-03 08:00,2012-06-07 16:00,2012-06-03 08:00,2012-06-07 16:00,2012-06-03 08:00,2012-06-07 16:00,,2012-12-24 08:00,2012-12-30 16:00,,PT_Normal,,,,,RiiwMcD6w0qOG1pvnDhofg,,,,N,0,0,,,2012-06-19 11:46,2012-06-20 09:59,admin,admin,,,
407,82665,773,10476,850,1,0,N,N,N,CP_Drtn,TT_Task,DT_FixedDUR2,RV_OK,TK_Active,4229PCI90,Fabrication upto R.F.S,,1552,0,480,0,0,0,1120,0,0,0,,2012-03-21 00:00,,2012-12-31 08:00,2013-02-28 16:00,2012-08-06 16:00,2012-06-08 08:00,2012-08-06 16:00,2012-06-08 08:00,2012-08-06 16:00,2012-04-06 08:00,2012-09-04 16:00,,2012-12-31 08:00,2013-02-28 16:00,,PT_Normal,,,,,q5M7EnFeMkazcVEx5uRqcQ,,,,N,0,0,,,2012-06-19 11:46,2012-06-20 09:59,admin,admin,,,
408,82666,773,10476,851,1,0,N,N,N,CP_Drtn,TT_Task,DT_FixedDUR2,RV_OK,TK_NotStart,4229PCI100,Delivery upto site,,2984,1392,360,0,0,0,360,0,0,0,,,,2013-08-13 08:00,2013-09-26 16:00,,2012-08-07 08:00,2012-09-20 16:00,2012-08-07 08:00,2012-09-20 16:00,2012-08-07 08:00,2012-09-20 16:00,,2013-08-13 08:00,2013-09-26 16:00,,PT_Normal,,,,,VXaPTer7DEa6lE98vf7GUQ,,,,N,0,0,,,2012-06-19 11:46,2012-06-20 09:59,admin,admin,,,
409,82667,773,10476,849,1,100,N,N,N,CP_Drtn,TT_Task,DT_FixedDUR2,RV_OK,TK_Complete,4229PCI10,Issue RFQ for Chemical injection Pkg.,,,,0,0,0,0,16,0,0,0,,2011-08-24 08:00,2011-08-25 16:00,2012-12-24 08:00,2012-12-24 08:00,,2012-06-02 00:00,2012-06-02 00:00,,,2011-08-24 08:00,2011-08-25 16:00,,,,,PT_Normal,,,,,wzTChmTPLk+wnzyRMVz2bg,,,,N,0,0,,,2012-06-19 11:46,2012-06-20 10:09,admin,admin,,,
410,82668,773,10476,850,1,100,N,N,N,CP_Drtn,TT_Task,DT_FixedDUR2,RV_OK,TK_Complete,4229PCI20,Bidding for Chemical injection Pkg.,,,,0,0,0,0,192,0,0,0,,2011-08-26 08:00,2011-09-19 00:00,2012-12-24 08:00,2012-12-24 08:00,,2012-06-02 00:00,2012-06-02 00:00,,,2011-08-26 08:00,2011-09-18 16:00,,,,,PT_Normal,,,,,qwihuCt8SUWbbNTD1Xs0SA,,,,N,0,0,,,2012-06-19 11:46,2012-06-20 10:09,admin,admin,,,
411,82669,773,10476,849,1,100,N,N,N,CP_Drtn,TT_Task,DT_FixedDUR2,RV_OK,TK_Complete,4229PCI40,Commercial evaluation & bid committee for Chemical injection Pkg.,,,,0,0,0,0,80,0,0,0,,2012-02-28 00:00,2012-03-06 16:00,2012-12-24 08:00,2012-12-24 08:00,,2012-06-02 00:00,2012-06-02 00:00,,,2012-03-04 08:00,2012-03-15 16:00,,,,,PT_Normal,,,,,V+VQcR4rmkunvtNNMkgURg,,,,N,0,0,,,2012-06-19 11:46,2012-06-20 10:09,admin,admin,,,
412,82670,773,10476,849,1,100,N,N,N,CP_Drtn,TT_Task,DT_FixedDUR2,RV_OK,TK_Complete,4229PCI60,F.O.C for Chemical injection Pkg.,,,,0,0,0,0,24,0,0,0,,2012-03-07 00:00,2012-03-20 00:00,2012-12-24 08:00,2012-12-24 08:00,,2012-06-02 00:00,2012-06-02 00:00,,,2012-04-01 08:00,2012-04-03 16:00,,,,,PT_Normal,,,,,679C4hOYw0egJEBwCzZsnw,,,,N,0,0,,,2012-06-19 11:46,2012-06-20 10:09,admin,admin,,,
413,82671,773,10476,849,1,100,N,N,N,CP_Drtn,TT_Task,DT_FixedDUR2,RV_OK,TK_Complete,4229PCI70,P.O for Chemical injection Pkg.,,,,0,0,0,0,40,0,0,0,,2012-04-08 00:00,2012-04-08 00:00,2012-12-24 08:00,2012-12-24 08:00,,2012-06-02 00:00,2012-06-02 00:00,,,2012-04-01 08:00,2012-04-05 16:00,,,,,PT_Normal,,,,,t/ismIeGx062GkcattCO/w,,,,N,0,0,,,2012-06-19 11:46,2012-06-20 10:09,admin,admin,,,
414,82672,773,10476,849,1,100,N,N,N,CP_Drtn,TT_LOE,DT_FixedDrtn,RV_OK,TK_Complete,A1030,T.E.R for Chemical injection,,,,0,0,0,0,160,0,0,0,,2011-09-19 08:00,2011-11-24 00:00,,,,,,,,2011-09-19 08:00,2011-10-17 16:00,,,,,PT_Normal,,,,,WjsjgzTSw0KHZgUfTv1+qg,UynpZlC0SEW7UHo8eeimsg,,,N,0,0,,,2012-06-19 11:46,2012-06-19 11:46,admin,admin,,,
415,82673,773,10476,849,1,100,N,N,N,CP_Drtn,TT_LOE,DT_FixedDUR2,RV_OK,TK_Complete,A1310,MRP for Chemical injection,,,,0,0,0,0,24,0,0,0,,2012-03-25 00:00,2012-04-05 00:00,,,,,,,,2012-03-25 08:00,2012-03-27 16:00,,,,,PT_Normal,,,,,3pTlLyLrzU+h8/d1FqPFvg,R1Sdma6vEUKAbOUepMCX5Q,,,N,0,0,,,2012-06-19 11:46,2012-06-19 11:46,admin,admin,,,
416,82674,773,10442,849,1,100,N,N,N,CP_Drtn,TT_Task,DT_FixedDUR2,RV_OK,TK_Complete,4229GM70,P/L Installation package- Approval,,,,0,0,0,0,200,0,0,0,,2011-09-28 08:00,2011-11-02 16:00,2013-09-26 16:00,2013-09-26 16:00,,2012-06-02 00:00,2012-06-02 00:00,,,2011-09-28 08:00,2011-11-02 16:00,,,,,PT_Normal,,,,,YEg9/TcV2EGE7mrxl0NHrQ,,,,N,0,0,,,2012-06-19 11:46,2012-06-20 10:09,admin,admin,,,
417,82675,773,10442,849,1,100,N,N,N,CP_Drtn,TT_Task,DT_FixedDUR2,RV_OK,TK_Complete,4229GM90,P/L  Installation package- Final,,,,0,0,0,0,160,0,0,0,,2011-11-24 08:00,2011-11-29 00:00,2013-09-26 16:00,2013-09-26 16:00,,2012-06-02 00:00,2012-06-02 00:00,,,2011-11-24 08:00,2011-12-21 16:00,,,,,PT_Normal,,,,,4j1BaMmwxkGXSK+ZVHb0NA,,,,N,0,0,,,2012-06-19 11:46,2012-06-20 10:09,admin,admin,,,
418,82676,773,10442,849,1,100,N,N,N,CP_Drtn,TT_Task,DT_FixedDUR2,RV_OK,TK_Complete,4229GM40,Final Project Design basis,,,,0,0,0,0,80,0,0,0,,2011-11-14 08:00,2011-11-27 16:00,2013-09-26 16:00,2013-09-26 16:00,,2012-06-02 00:00,2012-06-02 00:00,,,2011-11-14 08:00,2011-11-27 16:00,,,,,PT_Normal,,,,,YZdiEfpVX0SGMyXmwVC+6A,,,,N,0,0,,,2012-06-19 11:46,2012-06-20 10:09,admin,admin,,,
419,82677,773,10442,849,1,100,N,N,N,CP_Drtn,TT_Task,DT_FixedDUR2,RV_OK,TK_Complete,4229GM50,Platform Installation package- Approval,,,,0,0,0,0,160,0,0,0,,2011-08-15 00:00,2011-10-23 00:00,2013-09-26 16:00,2013-09-26 16:00,,2012-06-02 00:00,2012-06-02 00:00,,,2011-10-17 08:00,2011-11-20 16:00,,,,,PT_Normal,,,,,5UITG2gm0kyOL7VB8PCS+A,,,,N,0,0,,,2012-06-19 11:46,2012-06-20 10:09,admin,admin,,,
420,82678,773,10442,849,1,100,N,N,N,CP_Drtn,TT_Task,DT_FixedDUR2,RV_OK,TK_Complete,4229GM80,Platform Installation package- Final,,,,0,0,0,0,160,0,0,0,,2011-10-23 00:00,2011-10-24 00:00,2013-09-26 16:00,2013-09-26 16:00,,2012-06-02 00:00,2012-06-02 00:00,,,2011-11-13 08:00,2011-12-08 16:00,,,,,PT_Normal,,,,,tnWCAs+k+k66cpSRLw0oJQ,,,,N,0,0,,,2012-06-19 11:46,2012-06-20 10:09,admin,admin,,,
421,82679,773,10442,849,1,0,N,N,N,CP_Drtn,TT_Task,DT_FixedDUR2,RV_OK,TK_NotStart,4229GM130,Internal Design Review meeting,,2664,1368,16,0,0,0,16,0,0,0,,,,2013-09-25 08:00,2013-09-26 16:00,,2012-06-03 08:00,2012-06-04 16:00,2012-06-03 08:00,2012-06-04 16:00,2012-06-03 08:00,2012-06-04 16:00,,2013-09-25 08:00,2013-09-26 16:00,,PT_Normal,,,,,IsWmFjbYo0ClXFYJZE8aKw,,,,N,0,0,,,2012-06-19 11:46,2012-06-20 09:59,admin,admin,,,
422,82680,773,10442,849,1,100,N,N,N,CP_Drtn,TT_Task,DT_FixedDUR2,RV_OK,TK_Complete,4229GM20,Project Design basis IFA,,,,0,0,0,0,80,0,0,0,,2011-09-29 08:00,2011-10-23 16:00,2013-09-26 16:00,2013-09-26 16:00,,2012-06-02 00:00,2012-06-02 00:00,,,2011-09-29 08:00,2011-10-13 16:00,,,,,PT_Normal,,,,,0r11PLPhvkSLuH3Z4zndng,q7j6wPJqRLqWzOiikNoPRg,,,N,0,0,,,2012-06-19 11:46,2012-06-20 10:09,admin,admin,,,
423,82681,773,10442,849,1,100,N,N,N,CP_Drtn,TT_Task,DT_FixedDUR2,RV_OK,TK_Complete,4229GM30,Platform fabrication package- Approval,,,,0,0,0,0,336,0,0,0,,2011-08-15 08:00,2011-10-23 00:00,2013-09-26 16:00,2013-09-26 16:00,,2012-06-02 00:00,2012-06-02 00:00,,,2011-08-15 08:00,2011-10-16 16:00,,,,,PT_Normal,,,,,kRqSFJh0U0mj98Dxa8tzkg,,,,N,0,0,,,2012-06-19 11:46,2012-06-20 10:09,admin,admin,,,
424,82682,773,10442,849,1,100,N,N,N,CP_Drtn,TT_Task,DT_FixedDUR2,RV_OK,TK_Complete,4229GM60,Platform fabrication  package- Final,,,,0,0,0,0,120,0,0,0,,2011-10-23 08:00,2011-10-24 00:00,2013-09-26 16:00,2013-09-26 16:00,,2012-06-02 00:00,2012-06-02 00:00,,,2011-10-23 08:00,2011-11-17 16:00,,,,,PT_Normal,,,,,dJqG4mLjnk2hyWyeie5YIA,,,,N,0,0,,,2012-06-19 11:46,2012-06-20 10:09,admin,admin,,,
425,82683,773,10442,849,1,100,N,N,N,CP_Drtn,TT_Task,DT_FixedDUR2,RV_OK,TK_Complete,4229GM150,Project quality assurance plan,,,,0,0,0,0,160,0,0,0,,2011-10-17 00:00,2011-11-13 00:00,2013-09-26 16:00,2013-09-26 16:00,,2012-06-02 00:00,2012-06-02 00:00,,,2011-10-30 08:00,2011-12-01 16:00,,,,,PT_Normal,,,,,u3Ir6J/SCEuMj1jGWzflGA,,,,N,0,0,,,2012-06-19 11:46,2012-06-20 10:09,admin,admin,,,
426,82684,773,10443,851,0,0,N,N,N,CP_Drtn,TT_FinMile,DT_FixedDrtn,RV_OK,TK_NotStart,4229GM120,Enppi scope completion,,1592,1592,0,0,0,0,0,0,0,0,,,,2013-09-26 16:00,2013-09-26 16:00,,2013-03-11 16:00,2013-03-11 16:00,2013-03-11 16:00,2013-03-11 16:00,2013-03-11 16:00,2013-03-11 16:00,,2013-09-26 16:00,2013-09-26 16:00,,PT_Normal,,,,,zKvMHOvcNEawTVl11SueQg,BiEujtK1VU2+qG7Mqg1nkw,,,N,0,0,,,2012-06-19 11:46,2012-06-20 09:59,admin,admin,,,
427,82685,773,10443,849,0,100,N,N,N,CP_Drtn,TT_Mile,DT_FixedDrtn,RV_OK,TK_Complete,4229GM10,Project Coming into force / Kick-off meeting,,,,0,0,0,0,0,0,0,0,,2011-08-15 08:00,2011-08-15 08:00,2012-06-04 08:00,2012-06-04 08:00,,2012-06-02 00:00,2012-06-02 00:00,,,2011-08-15 08:00,2011-08-15 08:00,,,,,PT_Normal,,,,,OvXhrRzr1E6SCs59o9akTQ,cEclb7XgSZ2M9TMglt0yjw,,,N,0,0,,,2012-06-19 11:46,2012-06-20 10:09,admin,admin,,,
428,82686,773,10443,849,0,0,N,N,N,CP_Drtn,TT_FinMile,DT_FixedDrtn,RV_OK,TK_NotStart,4229GM100,Engineering completion,,1296,152,0,0,0,0,0,0,0,0,,,,2013-09-26 16:00,2013-09-26 16:00,,2013-02-12 16:00,2013-02-12 16:00,2013-02-12 16:00,2013-02-12 16:00,2013-02-12 16:00,2013-02-12 16:00,,2013-09-26 16:00,2013-09-26 16:00,,PT_Normal,,,,,K0s0gkaHSE21Dp6QLwNVug,,,,N,0,0,,,2012-06-19 11:46,2012-06-20 09:59,admin,admin,,,
429,82687,773,10443,849,0,100,N,N,N,CP_Drtn,TT_FinMile,DT_FixedDrtn,RV_OK,TK_Complete,4229GM140,Change order 1 approval,,,,0,0,0,0,0,0,0,0,,2011-10-16 16:00,2011-10-16 16:00,2012-06-04 08:00,2012-06-04 08:00,,2012-06-02 00:00,2012-06-02 00:00,,,2011-10-16 16:00,2011-10-16 16:00,,,,,PT_Normal,,,,,tK6EdnA+ikuVNd3gApHSGw,,,,N,0,0,,,2012-06-19 11:46,2012-06-20 10:09,admin,admin,,,
430,82688,773,10443,851,0,0,N,N,N,CP_Drtn,TT_FinMile,DT_FixedDrtn,RV_OK,TK_NotStart,4229GM110,Material delivered at site- except Choke valve (offshore installation),,2024,432,0,0,0,0,0,0,0,0,,,,2013-09-26 16:00,2013-09-26 16:00,,2013-01-16 16:00,2013-01-16 16:00,2013-01-16 16:00,2013-01-16 16:00,2013-01-16 16:00,2013-01-16 16:00,,2013-09-26 16:00,2013-09-26 16:00,,PT_Normal,,,,,t8gJx7niW0KW22A5L7ryIA,p1tAFd/EwEWZbX7CxHkw5g,,,N,0,0,,,2012-06-19 11:46,2012-06-20 09:59,admin,admin,,,
431,82689,773,10493,849,1,100,N,N,N,CP_Drtn,TT_Task,DT_FixedDUR2,RV_OK,TK_Complete,A1620,Riser impact risk assessment study -IFA,,,,0,0,0,0,8,0,0,0,,2012-02-15 00:00,2012-02-27 00:00,2013-09-26 16:00,2013-09-26 16:00,,2012-06-02 00:00,2012-06-02 00:00,,,2012-04-29 08:00,2012-04-29 16:00,,,,,PT_Normal,,,,,U8hS1p2nWE6m8sJR3fQvdA,,,,N,0,0,,,2012-06-19 11:46,2012-06-20 10:09,admin,admin,,,
432,82690,773,10493,849,1,100,N,N,N,CP_Drtn,TT_Task,DT_FixedDUR2,RV_OK,TK_Complete,A1630,Final Riser impact  risk assessment study,,,,0,0,0,0,40,0,0,0,,2012-02-28 00:00,2012-05-10 00:00,2013-09-26 16:00,2013-09-26 16:00,,2012-06-02 00:00,2012-06-02 00:00,,,2012-04-29 08:00,2012-05-03 16:00,,,,,PT_Normal,,,,,Ssp2Q+ynrEy7OhDmVidT3g,,,,N,0,0,,,2012-06-19 11:46,2012-06-20 10:09,admin,admin,,,
433,82691,773,10495,849,1,0,N,N,N,CP_Drtn,TT_Task,DT_FixedDUR2,RV_OK,TK_NotStart,4229ELP500,Interconnection wiring diagram-Construction,,2200,0,80,0,0,0,80,0,0,0,,,,2013-09-08 08:00,2013-09-19 16:00,,2012-08-05 08:00,2012-08-16 16:00,2012-08-05 08:00,2012-08-16 16:00,2012-08-05 08:00,2012-08-16 16:00,,2013-09-08 08:00,2013-09-19 16:00,,PT_Normal,,,,,i4kLhc8vWEWqQ6yZg9m93Q,,,,N,0,0,,,2012-06-19 11:46,2012-06-20 09:59,admin,admin,,,
434,82692,773,10495,849,1,100,N,N,N,CP_Drtn,TT_Task,DT_FixedDUR2,RV_OK,TK_Complete,4229ELP510,F&G installation details -Approval,,,,0,0,0,0,80,0,0,0,,2011-11-13 00:00,2012-02-15 00:00,2013-09-22 08:00,2013-09-22 08:00,,2012-06-02 00:00,2012-06-02 00:00,,,2011-12-04 08:00,2011-12-15 16:00,,,,,PT_Normal,,,,,UGC7kMaUoEagIJ47ZbezAQ,,,,N,0,0,,,2012-06-19 11:46,2012-06-20 10:09,admin,admin,,,
435,82693,773,10495,849,1,0,N,N,N,CP_Drtn,TT_Task,DT_FixedDUR2,RV_OK,TK_Active,4229ELP520,F&G installation details -Design,,2640,0,0,0,0,0,80,0,0,0,,2012-02-26 00:00,,2013-09-19 16:00,2013-09-19 16:00,2012-05-31 16:00,2012-06-03 08:00,2012-06-03 08:00,2012-06-03 08:00,2012-06-03 08:00,2012-03-04 08:00,2012-03-15 16:00,,2013-09-19 16:00,2013-09-19 16:00,,PT_Normal,,,,,Vb+p+e3X80uT2MGgey9PGA,,,,N,0,0,,,2012-06-19 11:46,2012-06-20 09:59,admin,admin,,,
436,82694,773,10495,849,1,0,N,N,N,CP_Drtn,TT_Task,DT_FixedDUR2,RV_OK,TK_NotStart,4229ELP530,F&G installation details -Construction,,2200,904,40,0,0,0,40,0,0,0,,,,2013-09-22 08:00,2013-09-26 16:00,,2012-08-26 08:00,2012-08-30 16:00,2012-08-26 08:00,2012-08-30 16:00,2012-08-26 08:00,2012-08-30 16:00,,2013-09-22 08:00,2013-09-26 16:00,,PT_Normal,,,,,Nw6bcoM+B0ahd18P2w9hGg,,,,N,0,0,,,2012-06-19 11:46,2012-06-20 09:59,admin,admin,,,
437,82695,773,10495,849,1,100,N,N,N,CP_Drtn,TT_Task,DT_FixedDUR2,RV_OK,TK_Complete,4229ELP70,F& G detection layout -Approval,,,,0,0,0,0,80,0,0,0,,2011-11-22 00:00,2011-12-28 00:00,2013-09-22 08:00,2013-09-22 08:00,,2012-06-02 00:00,2012-06-02 00:00,,,2011-12-04 08:00,2011-12-15 16:00,,,,,PT_Normal,,,,,+CNuAvEBr0mN+jBr5F+fvA,,,,N,0,0,,,2012-06-19 11:46,2012-06-20 10:09,admin,admin,,,
438,82696,773,10495,849,1,100,N,N,N,CP_Drtn,TT_Task,DT_FixedDUR2,RV_OK,TK_Complete,4229ELP220,F& G detection layout -Design,,,,0,0,0,0,120,0,0,0,,2012-01-19 00:00,2012-02-27 00:00,2013-09-22 08:00,2013-09-22 08:00,,2012-06-02 00:00,2012-06-02 00:00,,,2012-03-04 08:00,2012-03-22 16:00,,,,,PT_Normal,,,,,pHGTkoaQi0S4UF7bimPjug,,,,N,0,0,,,2012-06-19 11:46,2012-06-20 10:09,admin,admin,,,
439,82697,773,10495,849,1,0,N,N,N,CP_Drtn,TT_Task,DT_FixedDUR2,RV_OK,TK_NotStart,4229ELP360,F& G detection layout -Construction,,2240,40,120,0,0,0,120,0,0,0,,,,2013-09-01 08:00,2013-09-19 16:00,,2012-07-22 08:00,2012-08-09 16:00,2012-07-22 08:00,2012-08-09 16:00,2012-07-22 08:00,2012-08-09 16:00,,2013-09-01 08:00,2013-09-19 16:00,,PT_Normal,,,,,+IBC/GlCy0WzGFg1ISqZWA,,,,N,0,0,,,2012-06-19 11:46,2012-06-20 09:59,admin,admin,,,
440,82698,773,10495,849,1,100,N,N,N,CP_Drtn,TT_Task,DT_FixedDUR2,RV_OK,TK_Complete,4229ELP80,"Fire fighting, Safety equipment & escape route layout-Approval",,,,0,0,0,0,80,0,0,0,,2011-11-22 00:00,2011-12-29 08:00,2013-09-22 08:00,2013-09-22 08:00,,2012-06-02 00:00,2012-06-02 00:00,,,2011-12-04 08:00,2011-12-15 16:00,,,,,PT_Normal,,,,,ya5+yK2odEyeRE8ICYPmzw,,,,N,0,0,,,2012-06-19 11:46,2012-06-20 10:09,admin,admin,,,
441,82699,773,10495,849,1,100,N,N,N,CP_Drtn,TT_Task,DT_FixedDUR2,RV_OK,TK_Complete,4229ELP230,"Fire fighting, Safety equipment & escape route layout-Design",,,,0,0,0,0,120,0,0,0,2012-01-01 00:00,2012-01-29 00:00,2012-01-29 00:00,2013-09-22 08:00,2013-09-22 08:00,,2012-06-02 00:00,2012-06-02 00:00,,,2012-03-04 08:00,2012-03-22 16:00,,,,CS_MSOA,PT_Normal,,,,,EWwmFyl8fkmm5qU5ePgIvw,,,,N,0,0,,,2012-06-19 11:46,2012-06-20 10:09,admin,admin,,,
442,82700,773,10495,849,1,0,N,N,N,CP_Drtn,TT_Task,DT_FixedDUR2,RV_OK,TK_NotStart,4229ELP380,"Fire fighting, Safety equipment & escape route layout-Construction",,2200,0,80,0,0,0,80,0,0,0,,,,2013-08-25 08:00,2013-09-05 16:00,,2012-07-22 08:00,2012-08-02 16:00,2012-07-22 08:00,2012-08-02 16:00,2012-07-22 08:00,2012-08-02 16:00,,2013-08-25 08:00,2013-09-05 16:00,,PT_Normal,,,,,mknmKCLyb0a4/Kqr1W/Rlg,,,,N,0,0,,,2012-06-19 11:46,2012-06-20 09:59,admin,admin,,,
443,82701,773,10495,849,1,100,N,N,N,CP_Drtn,TT_Task,DT_FixedDUR2,RV_OK,TK_Complete,4229ELP110,F& G cable routing -Approval,,,,0,0,0,0,40,0,0,0,,2012-01-01 08:00,2012-01-26 00:00,2013-08-19 08:00,2013-08-19 08:00,,2012-06-02 00:00,2012-06-02 00:00,,,2012-01-01 08:00,2012-01-05 16:00,,,,,PT_Normal,,,,,Tvqro5ZQQUuJ6H+d1DXumw,,,,N,0,0,,,2012-06-19 11:46,2012-06-20 10:09,admin,admin,,,
444,82702,773,10495,849,1,100,N,N,N,CP_Drtn,TT_Task,DT_FixedDUR2,RV_OK,TK_Complete,4229ELP260,F& G cable routing -Design,,,,0,0,0,0,80,0,0,0,,2012-01-29 00:00,2012-02-06 00:00,2013-09-22 08:00,2013-09-22 08:00,,2012-06-02 00:00,2012-06-02 00:00,,,2012-03-06 08:00,2012-03-19 16:00,,,,,PT_Normal,,,,,gsFRj4WiH0exAfNWghdyCg,,,,N,0,0,,,2012-06-19 11:46,2012-06-20 10:09,admin,admin,,,
445,82703,773,10495,849,1,0,N,N,N,CP_Drtn,TT_Task,DT_FixedDUR2,RV_OK,TK_NotStart,4229ELP390,F& G cable routing -Construction,,2200,0,80,0,0,0,80,0,0,0,,,,2013-09-01 08:00,2013-09-12 16:00,,2012-07-29 08:00,2012-08-09 16:00,2012-07-29 08:00,2012-08-09 16:00,2012-07-29 08:00,2012-08-09 16:00,,2013-09-01 08:00,2013-09-12 16:00,,PT_Normal,,,,,hXsCk+ouk0K/vBW+/cYSsg,,,,N,0,0,,,2012-06-19 11:46,2012-06-20 09:59,admin,admin,,,
446,82704,773,10495,849,1,100,N,N,N,CP_Drtn,TT_Task,DT_FixedDUR2,RV_OK,TK_Complete,4229ELP40,Hazardous area classification schedule-IFA,,,,0,0,0,0,24,0,0,0,,2011-11-10 00:00,2011-11-13 00:00,2013-09-15 08:00,2013-09-15 08:00,,2012-06-02 00:00,2012-06-02 00:00,,,2011-12-18 08:00,2011-12-20 16:00,,,,,PT_Normal,,,,,17CUF/nrbEGxnA/khTgfIQ,,,,N,0,0,,,2012-06-19 11:46,2012-06-20 10:09,admin,admin,,,
447,82705,773,10495,849,1,100,N,N,N,CP_Drtn,TT_Task,DT_FixedDUR2,RV_OK,TK_Complete,4229ELP150,Hazardous area classification schedule-IFD,,,,0,0,0,0,24,0,0,0,,2011-11-20 00:00,2011-11-23 00:00,2013-09-19 16:00,2013-09-19 16:00,,2012-06-02 00:00,2012-06-02 00:00,,,2012-01-09 08:00,2012-01-11 16:00,,,,,PT_Normal,,,,,t6LaSowuSEyv/I0QZnsaTA,,,,N,0,0,,,2012-06-19 11:46,2012-06-20 10:09,admin,admin,,,
448,82706,773,10495,849,1,0,N,N,N,CP_Drtn,TT_Task,DT_FixedDUR2,RV_OK,TK_NotStart,4229ELP370,Hazardous area classification schedule-IFC,,2216,0,24,0,0,0,24,0,0,0,,,,2013-08-27 08:00,2013-08-29 16:00,,2012-07-22 08:00,2012-07-24 16:00,2012-07-22 08:00,2012-07-24 16:00,2012-07-22 08:00,2012-07-24 16:00,,2013-08-27 08:00,2013-08-29 16:00,,PT_Normal,,,,,cQZr5+OjXU+qRVK/BphzAQ,,,,N,0,0,,,2012-06-19 11:46,2012-06-20 09:59,admin,admin,,,
449,82707,773,10495,849,1,100,N,N,N,CP_Drtn,TT_Task,DT_FixedDUR2,RV_OK,TK_Complete,4229ELP450,F& G cable list -Approval,,,,0,0,0,0,40,0,0,0,2012-01-09 00:00,2012-01-09 08:00,2012-01-19 00:00,2013-09-22 08:00,2013-09-22 08:00,,2012-06-02 00:00,2012-06-02 00:00,,,2012-01-09 08:00,2012-01-15 16:00,,,,CS_MSOA,PT_Normal,,,,,FFP7IxMZ0UyhOZ9eUR+rdQ,,,,N,0,0,,,2012-06-19 11:46,2012-06-20 10:09,admin,admin,,,
450,82708,773,10495,849,1,100,N,N,N,CP_Drtn,TT_Task,DT_FixedDUR2,RV_OK,TK_Complete,4229ELP460,F& G cable list -Design,,,,0,0,0,0,40,0,0,0,,2012-01-15 00:00,2012-01-24 00:00,2013-09-22 08:00,2013-09-22 08:00,,2012-06-02 00:00,2012-06-02 00:00,,,2012-03-04 08:00,2012-03-08 16:00,,,,,PT_Normal,,,,,geTJAoFQ2EWSfZJIz/t8BA,,,,N,0,0,,,2012-06-19 11:46,2012-06-20 10:09,admin,admin,,,
451,82709,773,10495,849,1,0,N,N,N,CP_Drtn,TT_Task,DT_FixedDUR2,RV_OK,TK_NotStart,4229ELP470,F& G cable list -Construction,,2240,40,40,0,0,0,40,0,0,0,,,,2013-09-15 08:00,2013-09-19 16:00,,2012-08-05 08:00,2012-08-09 16:00,2012-08-05 08:00,2012-08-09 16:00,2012-08-05 08:00,2012-08-09 16:00,,2013-09-15 08:00,2013-09-19 16:00,,PT_Normal,,,,,GVSbl9HH5Eyb7Whvp/sz9Q,,,,N,0,0,,,2012-06-19 11:46,2012-06-20 09:59,admin,admin,,,
452,82710,773,10495,849,1,100,N,N,N,CP_Drtn,TT_Task,DT_FixedDUR2,RV_OK,TK_Complete,4229ELP480,Interconnection wiring diagram-Approval,,,,0,0,0,0,40,0,0,0,,2012-01-04 08:00,2012-02-01 00:00,2013-09-22 08:00,2013-09-22 08:00,,2012-06-02 00:00,2012-06-02 00:00,,,2012-01-04 08:00,2012-01-10 16:00,,,,,PT_Normal,,,,,+8dFxNwMWU+qVkpT3oniKA,,,,N,0,0,,,2012-06-19 11:46,2012-06-20 10:09,admin,admin,,,
453,82711,773,10495,849,1,100,N,N,N,CP_Drtn,TT_Task,DT_FixedDUR2,RV_OK,TK_Complete,4229ELP490,Interconnection wiring diagram-Design,,,,0,0,0,0,80,0,0,0,,2012-03-15 00:00,2012-03-20 00:00,2013-09-22 08:00,2013-09-22 08:00,,2012-06-02 00:00,2012-06-02 00:00,,,2012-04-01 08:00,2012-04-12 16:00,,,,,PT_Normal,,,,,0hT9hBPEF0WXgqAOm1dp8A,,,,N,0,0,,,2012-06-19 11:46,2012-06-20 10:09,admin,admin,,,
454,82712,773,10505,849,1,100,N,N,N,CP_Drtn,TT_Task,DT_FixedDUR2,RV_OK,TK_Complete,4229ELP130,HAZOP meeting /Report,,,,0,0,0,0,80,0,0,0,2012-02-06 08:00,2012-02-02 00:00,2012-02-21 00:00,2013-08-05 08:00,2013-08-05 08:00,,2012-06-02 00:00,2012-06-02 00:00,,,2012-03-04 08:00,2012-03-15 16:00,,,,CS_MSO,PT_Normal,,,,,rhPXxfJP2UWCyM7fQs1CjA,,,,N,0,0,,,2012-06-19 11:46,2012-06-20 10:09,admin,admin,,,
455,82713,773,10505,849,1,100,N,N,N,CP_Drtn,TT_Task,DT_FixedDUR2,RV_OK,TK_Complete,4229ELP10,HSE Plan -Approval,,,,0,0,0,0,80,0,0,0,,2011-09-29 08:00,2011-10-13 16:00,2013-08-13 08:00,2013-08-13 08:00,,2012-06-02 00:00,2012-06-02 00:00,,,2011-09-29 08:00,2011-10-13 16:00,,,,,PT_Normal,,,,,ISq65oNaHEKeZ4X7nQKaiQ,,,,N,0,0,,,2012-06-19 11:46,2012-06-20 10:09,admin,admin,,,
456,82714,773,10505,849,1,100,N,N,N,CP_Drtn,TT_Task,DT_FixedDUR2,RV_OK,TK_Complete,4229ELP20,HSE Plan -Final,,,,0,0,0,0,40,0,0,0,,2011-11-13 00:00,2011-11-15 00:00,2013-09-17 08:00,2013-09-17 08:00,,2012-06-02 00:00,2012-06-02 00:00,,,2011-12-04 08:00,2011-12-08 16:00,,,,,PT_Normal,,,,,xJZ/+LfLgUyAsm9NnhhYAw,,,,N,0,0,,,2012-06-19 11:46,2012-06-20 10:09,admin,admin,,,
457,82715,773,10505,849,1,100,N,N,N,CP_Drtn,TT_Task,DT_FixedDUR2,RV_OK,TK_Complete,4229ELP30,HSE philosophy - Approval,,,,0,0,0,0,80,0,0,0,,2011-10-16 00:00,2011-11-03 00:00,2013-08-13 08:00,2013-08-13 08:00,,2012-06-02 00:00,2012-06-02 00:00,,,2011-12-04 08:00,2011-12-15 16:00,,,,,PT_Normal,,,,,okoXEzp5tUKg/kTklsevHw,,,,N,0,0,,,2012-06-19 11:46,2012-06-20 10:09,admin,admin,,,
458,82716,773,10505,849,1,100,N,N,N,CP_Drtn,TT_Task,DT_FixedDUR2,RV_OK,TK_Complete,4229ELP90,HSE philosophy - Final,,,,0,0,0,0,40,0,0,0,,2011-11-20 00:00,2011-11-23 00:00,2013-09-17 08:00,2013-09-17 08:00,,2012-06-02 00:00,2012-06-02 00:00,,,2011-12-25 08:00,2011-12-29 16:00,,,,,PT_Normal,,,,,dmtrYwsq70e3RHPEBAhUcg,,,,N,0,0,,,2012-06-19 11:46,2012-06-20 10:09,admin,admin,,,
459,82717,773,10505,849,1,100,N,N,N,CP_Drtn,TT_Task,DT_FixedDUR2,RV_OK,TK_Complete,4229ELP410,SIL Review report-Final,,,,0,0,0,0,88,0,0,0,,2012-04-23 00:00,2012-05-30 00:00,2013-09-26 16:00,2013-09-26 16:00,,2012-06-02 00:00,2012-06-02 00:00,,,2012-06-03 08:00,2012-06-17 16:00,,,,,PT_Normal,,,,,zmAZ5somHEeMOw8+guBHoQ,,,,N,0,0,,,2012-06-19 11:46,2012-06-20 10:09,admin,admin,,,
460,82718,773,10505,849,1,100,N,N,N,CP_Drtn,TT_Task,DT_FixedDUR2,RV_OK,TK_Complete,4229ELP100,Fire & explosion HAZARD analysis- Approval,,,,0,0,0,0,120,0,0,0,,2011-11-22 00:00,2011-11-23 00:00,2013-08-13 08:00,2013-08-13 08:00,,2012-06-02 00:00,2012-06-02 00:00,,,2011-12-04 08:00,2011-12-22 16:00,,,,,PT_Normal,,,,,31V2k7SnAUmxLMJiHDZKJw,,,,N,0,0,,,2012-06-19 11:46,2012-06-20 10:09,admin,admin,,,
461,82719,773,10505,849,1,100,N,N,N,CP_Drtn,TT_Task,DT_FixedDUR2,RV_OK,TK_Complete,4229ELP140,Fire & Explosion HAZARD analysis- Final,,,,0,0,0,0,80,0,0,0,,2012-02-16 00:00,2012-03-05 00:00,2013-08-13 08:00,2013-08-13 08:00,,2012-06-02 00:00,2012-06-02 00:00,,,2012-01-01 08:00,2012-01-12 16:00,,,,,PT_Normal,,,,,59hTFNc6S0CUWqNtafuWWQ,,,,N,0,0,,,2012-06-19 11:46,2012-06-20 10:09,admin,admin,,,
462,82720,773,10505,849,1,0,N,N,N,CP_Drtn,TT_Task,DT_FixedDUR2,RV_OK,TK_NotStart,4229ELP120,SAMS report-Approval,,2368,0,80,0,0,0,80,0,0,0,,,,2013-08-13 08:00,2013-08-26 16:00,,2012-06-11 08:00,2012-06-24 16:00,2012-06-11 08:00,2012-06-24 16:00,2012-06-11 08:00,2012-06-24 16:00,,2013-08-13 08:00,2013-08-26 16:00,,PT_Normal,,,,,VyHZOf7w+ECMNNZPCuQrnQ,,,,N,0,0,,,2012-06-19 11:46,2012-06-20 09:59,admin,admin,,,
463,82721,773,10505,849,1,0,N,N,N,CP_Drtn,TT_Task,DT_FixedDUR2,RV_OK,TK_NotStart,4229ELP180,SAMS report-Final,,2368,0,80,0,0,0,80,0,0,0,,,,2013-09-03 08:00,2013-09-16 16:00,,2012-07-02 08:00,2012-07-15 16:00,2012-07-02 08:00,2012-07-15 16:00,2012-07-02 08:00,2012-07-15 16:00,,2013-09-03 08:00,2013-09-16 16:00,,PT_Normal,,,,,98gwgieZP06wKh9bUYP/Uw,,,,N,0,0,,,2012-06-19 11:46,2012-06-20 09:59,admin,admin,,,
464,82722,773,10505,849,1,0,N,N,N,CP_Drtn,TT_Task,DT_FixedDUR2,RV_OK,TK_NotStart,4229ELP340,HAZARD register,,2368,1072,64,0,0,0,64,0,0,0,,,,2013-09-17 08:00,2013-09-26 16:00,,2012-07-16 08:00,2012-07-25 16:00,2012-07-16 08:00,2012-07-25 16:00,2012-07-16 08:00,2012-07-25 16:00,,2013-09-17 08:00,2013-09-26 16:00,,PT_Normal,,,,,+j872HgN0EqzKLDx+/yF6g,,,,N,0,0,,,2012-06-19 11:46,2012-06-20 09:59,admin,admin,,,
465,82723,773,10505,849,1,100,N,N,N,CP_Drtn,TT_Task,DT_FixedDUR2,RV_OK,TK_Complete,4229ELP190,SCE performance standards-Approval,,,,0,0,0,0,80,0,0,0,,2012-02-09 00:00,2012-02-22 00:00,2013-08-13 08:00,2013-08-13 08:00,,2012-06-02 00:00,2012-06-02 00:00,,,2012-03-20 08:00,2012-04-02 16:00,,,,,PT_Normal,,,,,FY+aj8luZ020CPGsv/1bOA,,,,N,0,0,,,2012-06-19 11:46,2012-06-20 10:09,admin,admin,,,
466,82724,773,10505,849,1,100,N,N,N,CP_Drtn,TT_Task,DT_FixedDUR2,RV_OK,TK_Complete,4229ELP200,QRA -Approval,,,,0,0,0,0,120,0,0,0,,2012-02-26 00:00,2012-03-20 00:00,2013-08-13 08:00,2013-08-13 08:00,,2012-06-02 00:00,2012-06-02 00:00,,,2012-03-04 08:00,2012-03-22 16:00,,,,,PT_Normal,,,,,RFirK7oqfUmTkJfY7k++ew,,,,N,0,0,,,2012-06-19 11:46,2012-06-20 10:09,admin,admin,,,
467,82725,773,10505,849,1,100,N,N,N,CP_Drtn,TT_Task,DT_FixedDUR2,RV_OK,TK_Complete,4229ELP300,QRA -Final,,,,0,0,0,0,120,0,0,0,,2012-04-15 08:00,2012-04-18 00:00,2013-09-17 08:00,2013-09-17 08:00,,2012-06-02 00:00,2012-06-02 00:00,,,2012-04-15 08:00,2012-05-03 16:00,,,,,PT_Normal,,,,,NGd6eTQPwUyLLoO6SGRc0A,,,,N,0,0,,,2012-06-19 11:46,2012-06-20 10:09,admin,admin,,,
468,82726,773,10505,849,1,100,N,N,N,CP_Drtn,TT_Task,DT_FixedDUR2,RV_OK,TK_Complete,4229ELP240,HAZID report,,,,0,0,0,0,80,0,0,0,,2012-03-28 00:00,2012-05-03 00:00,2013-08-13 08:00,2013-08-13 08:00,,2012-06-02 00:00,2012-06-02 00:00,,,2012-04-01 08:00,2012-04-12 16:00,,,,,PT_Normal,,,,,SkHLRPghvUuX8mgerS6M7g,,,,N,0,0,,,2012-06-19 11:46,2012-06-20 10:09,admin,admin,,,
469,82727,773,10505,849,1,100,N,N,N,CP_Drtn,TT_Task,DT_FixedDUR2,RV_OK,TK_Complete,4229ELP250,ENVID report,,,,0,0,0,0,80,0,0,0,,2012-03-28 00:00,2012-05-03 00:00,2013-08-13 08:00,2013-08-13 08:00,,2012-06-02 00:00,2012-06-02 00:00,,,2012-04-01 08:00,2012-04-12 16:00,,,,,PT_Normal,,,,,oKxsycGgnE2Pzo4ViK7sMQ,,,,N,0,0,,,2012-06-19 11:46,2012-06-20 10:09,admin,admin,,,
470,82728,773,10505,849,1,0,N,N,N,CP_Drtn,TT_Task,DT_FixedDUR2,RV_OK,TK_Active,4229ELP210,HAZOP close out report,,2368,0,48,0,0,0,120,0,0,0,,2012-03-28 00:00,,2013-08-05 08:00,2013-08-12 16:00,2012-06-10 16:00,2012-06-03 08:00,2012-06-10 16:00,2012-06-03 08:00,2012-06-10 16:00,2012-04-03 08:00,2012-04-23 16:00,,2013-08-05 08:00,2013-08-12 16:00,,PT_Normal,,,,,MTDkuYy/bU6IOxPXta0J2w,,,,N,0,0,,,2012-06-19 11:46,2012-06-20 09:59,admin,admin,,,
471,82729,773,10505,849,1,100,N,N,N,CP_Drtn,TT_Task,DT_FixedDUR2,RV_OK,TK_Complete,4229ELP280,PSSR report-Approval,,,,0,0,0,0,120,0,0,0,,2012-03-31 00:00,2012-03-31 00:00,2013-08-13 08:00,2013-08-13 08:00,,2012-06-02 00:00,2012-06-02 00:00,,,2012-04-01 08:00,2012-04-19 16:00,,,,,PT_Normal,,,,,vPuaH0v5LUGEEfopz/6VDQ,,,,N,0,0,,,2012-06-19 11:46,2012-06-20 10:09,admin,admin,,,
472,82730,773,10505,849,1,0,N,N,N,CP_Drtn,TT_Task,DT_FixedDUR2,RV_OK,TK_NotStart,4229ELP290,CHAZOP review report,,2240,944,96,0,0,0,96,0,0,0,,,,2013-09-11 08:00,2013-09-26 16:00,,2012-08-01 08:00,2012-08-16 16:00,2012-08-01 08:00,2012-08-16 16:00,2012-08-01 08:00,2012-08-16 16:00,,2013-09-11 08:00,2013-09-26 16:00,,PT_Normal,,,,,2/lMEo4GOE28vgumAzuqGQ,,,,N,0,0,,,2012-06-19 11:46,2012-06-20 09:59,admin,admin,,,
473,82731,773,10505,849,1,100,N,N,N,CP_Drtn,TT_Task,DT_FixedDUR2,RV_OK,TK_Complete,4229ELP160,SIL Review report-Approval,,,,0,0,0,0,80,0,0,0,2012-04-19 00:00,2012-04-19 00:00,2012-05-09 00:00,2013-08-13 08:00,2013-08-13 08:00,,2012-06-02 00:00,2012-06-02 00:00,,,2012-04-19 08:00,2012-05-02 16:00,,,,CS_MSOA,PT_Normal,,,,,dcPeTDqJgESDoWeKfQM8ZA,,,,N,0,0,,,2012-06-19 11:46,2012-06-20 10:09,admin,admin,,,
474,82732,773,10505,849,1,100,N,N,N,CP_Drtn,TT_Task,DT_FixedDUR2,RV_OK,TK_Complete,4229ELP50,Update & issue safety life cycle-Approval,,,,0,0,0,0,0,0,0,0,,2012-02-19 00:00,2012-02-23 00:00,2013-09-17 08:00,2013-09-17 08:00,,2012-06-02 00:00,2012-06-02 00:00,,,2012-03-04 08:00,2012-03-04 08:00,,,,,PT_Normal,,,,,1urKn4oaXkWWPo9aKYvLUQ,,,,N,0,0,,,2012-06-19 11:46,2012-06-20 10:09,admin,admin,,,
475,82733,773,10505,849,1,100,N,N,N,CP_Drtn,TT_Task,DT_FixedDUR2,RV_OK,TK_Complete,4229ELP270,SCE performance standards-Final,,,,0,0,0,0,40,0,0,0,,2012-03-15 00:00,2012-03-20 00:00,2013-09-26 16:00,2013-09-26 16:00,,2012-06-02 00:00,2012-06-02 00:00,,,2012-04-01 08:00,2012-04-05 16:00,,,,,PT_Normal,,,,,X+oYOnWjcEeYNufYqIOfNw,,,,N,0,0,,,2012-06-19 11:46,2012-06-20 10:09,admin,admin,,,
476,82734,773,10505,849,1,100,N,N,N,CP_Drtn,TT_Task,DT_FixedDUR2,RV_OK,TK_Complete,4229ELP350,PSSR report-Final,,,,0,0,0,0,80,0,0,0,,2012-03-31 00:00,2012-03-31 00:00,2013-09-26 16:00,2013-09-26 16:00,,2012-06-02 00:00,2012-06-02 00:00,,,2012-04-15 08:00,2012-04-26 16:00,,,,,PT_Normal,,,,,P8dVSYFD50+iX6Y/tjFcyg,,,,N,0,0,,,2012-06-19 11:46,2012-06-20 10:09,admin,admin,,,
477,82735,773,10505,849,1,100,N,N,N,CP_Drtn,TT_Task,DT_FixedDUR2,RV_OK,TK_Complete,4229ELP540,Update & issue safety life cycle-Design,,,,0,0,0,0,176,0,0,0,,2012-04-05 00:00,2012-04-10 00:00,2013-09-26 16:00,2013-09-26 16:00,,2012-06-02 00:00,2012-06-02 00:00,,,2012-04-01 08:00,2012-04-30 16:00,,,,,PT_Normal,,,,,SQHrF66Bl0O5Deg1Zdzr8g,,,,N,0,0,,,2012-06-19 11:46,2012-06-20 10:09,admin,admin,,,
478,82736,773,10497,849,1,0,N,N,N,CP_Drtn,TT_Task,DT_FixedDUR2,RV_OK,TK_NotStart,4229ELP580,V.P.R for fire  & Gas detection,,2160,1016,280,0,0,0,280,0,0,0,,,,2013-08-11 08:00,2013-09-26 16:00,,2012-07-15 08:00,2012-09-06 16:00,2012-07-15 08:00,2012-09-06 16:00,2012-07-15 08:00,2012-09-06 16:00,,2013-08-11 08:00,2013-09-26 16:00,,PT_Normal,,,,,bqiRqQYWNE6NHH2m5IKwlA,FUD2dy+nUkWc4VQGU8Fo/w,,,N,0,0,,,2012-06-19 11:46,2012-06-20 09:59,admin,admin,,,
479,82737,773,10497,849,1,100,N,N,N,CP_Drtn,TT_Task,DT_FixedDUR2,RV_OK,TK_Complete,4229ELP590,MRQ for life saving equioment,,,,0,0,0,0,40,0,0,0,,2011-12-29 00:00,2012-01-02 16:00,2013-09-07 08:00,2013-09-07 08:00,,2012-06-02 00:00,2012-06-02 00:00,,,2012-01-01 08:00,2012-01-05 16:00,,,,,PT_Normal,,,,,sXX5VvdA70a08oNyyj5cxA,ZarfSMY5fUiYAgPPzTZXNw,,,N,0,0,,,2012-06-19 11:46,2012-06-20 10:09,admin,admin,,,
480,82738,773,10497,849,1,100,N,N,N,CP_Drtn,TT_Task,DT_FixedDUR2,RV_OK,TK_Complete,4229ELP600,T.E.R for life saving equipment,,,,0,0,0,0,120,0,0,0,,2012-02-15 00:00,2012-05-15 00:00,2013-09-07 08:00,2013-09-07 08:00,,2012-06-02 00:00,2012-06-02 00:00,,,2012-03-04 08:00,2012-03-22 16:00,,,,,PT_Normal,,,,,PV4AwveJzEK879BIVMmb3A,OB2BdTMxnk6owJhgDyBB4w,,,N,0,0,,,2012-06-19 11:46,2012-06-20 10:09,admin,admin,,,
481,82739,773,10497,849,1,100,N,N,N,CP_Drtn,TT_Task,DT_FixedDUR2,RV_OK,TK_Complete,4229ELP610,MRP for life saving equipment,,,,0,0,0,0,40,0,0,0,,2012-05-15 00:00,2012-05-15 00:00,2013-09-07 08:00,2013-09-07 08:00,,2012-06-02 00:00,2012-06-02 00:00,,,2012-06-18 08:00,2012-06-24 16:00,,,,,PT_Normal,,,,,w9z7kbUcSE2HBWdr67uULg,KKpGjp0KxUWDHbPmNRucRw,,,N,0,0,,,2012-06-19 11:46,2012-06-20 10:09,admin,admin,,,
482,82740,773,10497,849,1,100,N,N,N,CP_Drtn,TT_Task,DT_FixedDUR2,RV_OK,TK_Complete,4229ELP620,V.P.R for life saving equipment,,,,0,0,0,0,240,0,0,0,,2012-05-15 00:00,2012-05-15 00:00,2013-09-26 16:00,2013-09-26 16:00,,2012-06-02 00:00,2012-06-02 00:00,,,2012-07-08 08:00,2012-08-16 16:00,,,,,PT_Normal,,,,,m5zqfWgobkWov562NON02A,FUD2dy+nUkWc4VQGU8Fo/w,,,N,0,0,,,2012-06-19 11:46,2012-06-20 10:09,admin,admin,,,
483,82741,773,10497,849,1,100,N,N,N,CP_Drtn,TT_Task,DT_FixedDUR2,RV_OK,TK_Complete,4229ELP60,MRQ for fire fighting system,,,,0,0,0,0,64,0,0,0,,2011-11-21 00:00,2011-11-22 00:00,2013-03-07 08:00,2013-03-07 08:00,,2012-06-02 00:00,2012-06-02 00:00,,,2011-12-04 08:00,2011-12-13 16:00,,,,,PT_Normal,,,,,wKP/GIQntEiW9dDwpqXCLw,,,,N,0,0,,,2012-06-19 11:46,2012-06-20 10:09,admin,admin,,,
484,82742,773,10497,849,1,100,N,N,N,CP_Drtn,TT_Task,DT_FixedDUR2,RV_OK,TK_Complete,4229ELP170,T.E.R for fire fighting system,,,,0,0,0,0,160,0,0,0,2012-04-03 00:00,2012-04-03 08:00,2012-05-29 00:00,2013-03-07 08:00,2013-03-07 08:00,,2012-06-02 00:00,2012-06-02 00:00,,,2012-04-03 08:00,2012-04-30 16:00,,,,CS_MSOA,PT_Normal,,,,,5GlXwMXVTUWCvyQEnN2hTg,,,,N,0,0,,,2012-06-19 11:46,2012-06-20 10:09,admin,admin,,,
485,82743,773,10497,849,1,0,N,N,N,CP_Drtn,TT_Task,DT_FixedDUR2,RV_OK,TK_NotStart,4229ELP330,MRP for fire fighting system,,1512,0,40,0,0,0,40,0,0,0,,,,2013-04-02 08:00,2013-04-08 16:00,,2012-06-27 08:00,2012-07-03 16:00,2012-06-27 08:00,2012-07-03 16:00,2012-06-27 08:00,2012-07-03 16:00,,2013-04-02 08:00,2013-04-08 16:00,,PT_Normal,,,,,Kp3etrGUrU2Vj0m5thBX5w,,,,N,0,0,,,2012-06-19 11:46,2012-06-20 09:59,admin,admin,,,
486,82744,773,10497,849,1,0,N,N,N,CP_Drtn,TT_Task,DT_FixedDUR2,RV_OK,TK_NotStart,4229ELP400,V.P.R for fire fighting system,,2000,704,240,0,0,0,240,0,0,0,,,,2013-08-18 08:00,2013-09-26 16:00,,2012-08-26 08:00,2012-10-04 16:00,2012-08-26 08:00,2012-10-04 16:00,2012-08-26 08:00,2012-10-04 16:00,,2013-08-18 08:00,2013-09-26 16:00,,PT_Normal,,,,,FYbakfw1k0eIhibOgSboWQ,,,,N,0,0,,,2012-06-19 11:46,2012-06-20 09:59,admin,admin,,,
487,82745,773,10497,849,1,100,N,N,N,CP_Drtn,TT_Task,DT_FixedDUR2,RV_OK,TK_Complete,4229ELP550,MRQ for fire  & Gas detection,,,,0,0,0,0,16,0,0,0,,2011-11-28 00:00,2012-01-01 16:00,2013-09-07 08:00,2013-09-07 08:00,,2012-06-02 00:00,2012-06-02 00:00,,,2011-12-08 08:00,2011-12-11 16:00,,,,,PT_Normal,,,,,4twDsb2aUUyFKWjhgvo4IQ,ZarfSMY5fUiYAgPPzTZXNw,,,N,0,0,,,2012-06-19 11:46,2012-06-20 10:09,admin,admin,,,
488,82746,773,10497,849,1,100,N,N,N,CP_Drtn,TT_Task,DT_FixedDUR2,RV_OK,TK_Complete,4229ELP560,T.E.R for fire  & Gas detection,,,,0,0,0,0,120,0,0,0,,2012-02-27 00:00,2012-05-03 16:00,2013-05-07 08:00,2013-05-07 08:00,,2012-06-02 00:00,2012-06-02 00:00,,,2012-03-20 08:00,2012-04-09 16:00,,,,,PT_Normal,,,,,jbVZXOUhCUKu50dvvdhFrg,OB2BdTMxnk6owJhgDyBB4w,,,N,0,0,,,2012-06-19 11:46,2012-06-20 10:09,admin,admin,,,
489,82747,773,10497,849,1,100,N,N,N,CP_Drtn,TT_Task,DT_FixedDUR2,RV_OK,TK_Complete,4229ELP570,MRP for fire  & Gas detection,,,,0,0,0,0,40,0,0,0,,2012-05-28 00:00,2012-05-29 00:00,2013-05-07 08:00,2013-05-07 08:00,,2012-06-02 00:00,2012-06-02 00:00,,,2012-06-03 08:00,2012-06-07 16:00,,,,,PT_Normal,,,,,A/NwO6uYxE6mhMmvTHO/jQ,KKpGjp0KxUWDHbPmNRucRw,,,N,0,0,,,2012-06-19 11:46,2012-06-20 10:09,admin,admin,,,
490,82748,773,10494,849,1,100,N,N,N,CP_Drtn,TT_Task,DT_FixedDUR2,RV_OK,TK_Complete,4229EPR220,Process simulation final report,,,,0,0,0,0,80,0,0,0,,2011-11-21 00:00,2011-11-21 00:00,2013-09-26 16:00,2013-09-26 16:00,,2012-06-02 00:00,2012-06-02 00:00,,,2011-11-24 08:00,2011-12-07 16:00,,,,,PT_Normal,,,,,mvV+T4GV5ESZSC7vgCbuYA,,,,N,0,0,,,2012-06-19 11:46,2012-06-20 10:09,admin,admin,,,
491,82749,773,10494,849,1,100,N,N,N,CP_Drtn,TT_Task,DT_FixedDUR2,RV_OK,TK_Complete,4229EPR260,Process simulation report-Approval,,,,0,0,0,0,64,0,0,0,,2011-10-31 08:00,2011-11-21 00:00,2013-09-26 16:00,2013-09-26 16:00,,2012-06-02 00:00,2012-06-02 00:00,,,2011-10-31 08:00,2011-11-16 16:00,,,,,PT_Normal,,,,,IZB23aeUPUWSfMsflKkTvQ,,,,N,0,0,,,2012-06-19 11:46,2012-06-20 10:09,admin,admin,,,
492,82750,773,10494,849,1,100,N,N,N,CP_Drtn,TT_Task,DT_FixedDUR2,RV_OK,TK_Complete,4229EPR100,Shutdown & control philosophy -Approval,,,,0,0,0,0,64,0,0,0,,2011-10-26 00:00,2011-11-23 00:00,2013-09-26 16:00,2013-09-26 16:00,,2012-06-02 00:00,2012-06-02 00:00,,,2011-10-30 08:00,2011-11-15 16:00,,,,,PT_Normal,,,,,pjdNC8ypj0KnbYqsorp76Q,,,,N,0,0,,,2012-06-19 11:46,2012-06-20 10:09,admin,admin,,,
493,82751,773,10494,849,1,100,N,N,N,CP_Drtn,TT_Task,DT_FixedDUR2,RV_OK,TK_Complete,4229EPR140,Shutdown & control philosophy -Final,,,,0,0,0,0,80,0,0,0,,2011-12-26 00:00,2012-05-13 00:00,2013-09-26 16:00,2013-09-26 16:00,,2012-06-02 00:00,2012-06-02 00:00,,,2011-12-08 08:00,2011-12-21 16:00,,,,,PT_Normal,,,,,yMISisxwjUaoEfGLNHtVHg,,,,N,0,0,,,2012-06-19 11:46,2012-06-20 10:09,admin,admin,,,
494,82752,773,10494,849,1,0,N,N,N,CP_Drtn,TT_Task,DT_FixedDUR2,RV_OK,TK_NotStart,4229EPR210,"Commissioning ,Pre-commissioning & operating philosophy-IFA",,2336,0,80,0,0,0,80,0,0,0,,,,2013-08-27 08:00,2013-09-09 16:00,,2012-07-01 08:00,2012-07-12 16:00,2012-07-01 08:00,2012-07-12 16:00,2012-07-01 08:00,2012-07-12 16:00,,2013-08-27 08:00,2013-09-09 16:00,,PT_Normal,,,,,y1aG0GlP2U2w7wELdH072w,,,,N,0,0,,,2012-06-19 11:46,2012-06-20 09:59,admin,admin,,,
495,82753,773,10494,849,1,0,N,N,N,CP_Drtn,TT_Task,DT_FixedDUR2,RV_OK,TK_NotStart,4229EPR230,"Commissioning ,Pre-commissioning & operating philosophy-Final",,2336,1040,64,0,0,0,64,0,0,0,,,,2013-09-17 08:00,2013-09-26 16:00,,2012-07-22 08:00,2012-07-31 16:00,2012-07-22 08:00,2012-07-31 16:00,2012-07-22 08:00,2012-07-31 16:00,,2013-09-17 08:00,2013-09-26 16:00,,PT_Normal,,,,,nl8/sIwxGkeYdFnoKzQ/PA,,,,N,0,0,,,2012-06-19 11:46,2012-06-20 09:59,admin,admin,,,
496,82754,773,10494,849,1,100,N,N,N,CP_Drtn,TT_Task,DT_FixedDUR2,RV_OK,TK_Complete,4229EPR110,Flow assurance report-Final,,,,0,0,0,0,40,0,0,0,,2011-11-24 08:00,2011-11-30 16:00,2013-09-26 16:00,2013-09-26 16:00,,2012-06-02 00:00,2012-06-02 00:00,,,2011-11-24 08:00,2011-11-30 16:00,,,,,PT_Normal,,,,,Gr6gi9hv3Euy+qwSplrxEw,,,,N,0,0,,,2012-06-19 11:46,2012-06-20 10:09,admin,admin,,,
497,82755,773,10494,849,1,100,N,N,N,CP_Drtn,TT_Task,DT_FixedDUR2,RV_OK,TK_Complete,4229EPR30,Flow assurance report-Approval,,,,0,0,0,0,160,0,0,0,,2011-09-26 08:00,2011-11-03 00:00,2013-09-26 16:00,2013-09-26 16:00,,2012-06-02 00:00,2012-06-02 00:00,,,2011-09-26 08:00,2011-10-24 16:00,,,,,PT_Normal,,,,,gWealoMahUKtI2RzXkimkw,,,,N,0,0,,,2012-06-19 11:46,2012-06-20 10:09,admin,admin,,,
498,82756,773,10494,849,1,100,N,N,N,CP_Drtn,TT_Task,DT_FixedDUR2,RV_OK,TK_Complete,4229EPR50,Process simulation,,,,0,0,0,0,80,0,0,0,,2011-08-25 08:00,2011-09-11 16:00,2012-12-24 08:00,2012-12-24 08:00,,2012-06-02 00:00,2012-06-02 00:00,,,2011-08-25 08:00,2011-09-11 16:00,,,,,PT_Normal,,,,,JvuR5K1pw0C83JzBPs8blA,9K5lbSWWSU+ZW7VGbG9JcQ,,,N,0,0,,,2012-06-19 11:46,2012-06-20 10:09,admin,admin,,,
499,82757,773,10509,849,1,100,N,N,N,CP_Drtn,TT_Task,DT_FixedDUR2,RV_OK,TK_Complete,4229EPR310,RE-ISSUE T.E.R for Chemical injection,,,,0,0,0,0,120,0,0,0,,2012-01-01 08:00,2012-02-21 00:00,2012-12-24 08:00,2012-12-24 08:00,,2012-06-02 00:00,2012-06-02 00:00,,,2012-01-01 08:00,2012-01-19 16:00,,,,,PT_Normal,,,,,enKc66vFAUWO8GuHv2JEsw,,,,N,0,0,,,2012-06-19 11:46,2012-06-20 10:09,admin,admin,,,
500,82758,773,10509,849,1,0,N,N,N,CP_Drtn,TT_Task,DT_FixedDUR2,RV_OK,TK_Active,4229EPR250,V.P.R for chemical injection,,2480,264,160,0,0,0,400,0,0,0,,2012-04-01 00:00,,2013-09-01 08:00,2013-09-26 16:00,,2012-06-10 08:00,2012-07-05 16:00,2012-06-10 08:00,2012-07-05 16:00,2012-05-20 08:00,2012-07-26 16:00,,2013-09-01 08:00,2013-09-26 16:00,,PT_Normal,,,,,wwLCNXtYKkG+62rPAjlf7g,,,,N,0,0,,,2012-06-19 11:46,2012-06-20 09:59,admin,admin,,,
501,82759,773,10509,849,1,0,N,N,N,CP_Drtn,TT_Task,DT_FixedDUR2,RV_OK,TK_Active,4229EPR240,V.P.R for P.S.V,,2320,264,320,0,0,0,320,0,0,0,,2012-04-17 00:00,,2013-08-04 08:00,2013-09-26 16:00,,2012-06-10 08:00,2012-08-02 16:00,2012-06-10 08:00,2012-08-02 16:00,2012-05-17 08:00,2012-07-11 16:00,,2013-08-04 08:00,2013-09-26 16:00,,PT_Normal,,,,,IpuOKFPDSE29q1GahvY7mw,,,,N,0,0,,,2012-06-19 11:46,2012-06-20 09:59,admin,admin,,,
502,82760,773,10509,849,1,100,N,N,N,CP_Drtn,TT_Task,DT_FixedDUR2,RV_OK,TK_Complete,4229EPR70,T.E.R for Chemical injection,,,,0,0,0,0,160,0,0,0,,2011-09-19 08:00,2011-11-24 00:00,2012-12-24 08:00,2012-12-24 08:00,,2012-06-02 00:00,2012-06-02 00:00,,,2011-09-19 08:00,2011-10-17 16:00,,,,,PT_Normal,,,,,ldZfoo4YGkGbXlrgtV+OCA,,,,N,0,0,,,2012-06-19 11:46,2012-06-20 10:09,admin,admin,,,
503,82761,773,10509,849,1,100,N,N,N,CP_Drtn,TT_Task,DT_FixedDUR2,RV_OK,TK_Complete,4229EPR150,MRP for Chemical injection,,,,0,0,0,0,24,0,0,0,,2012-03-25 00:00,2012-04-05 00:00,2012-12-24 08:00,2012-12-24 08:00,,2012-06-02 00:00,2012-06-02 00:00,,,2012-03-21 08:00,2012-03-25 16:00,,,,,PT_Normal,,,,,5UNnRTi8zUuCrpJMwvgcSA,,,,N,0,0,,,2012-06-19 11:46,2012-06-20 10:09,admin,admin,,,
504,82762,773,10509,849,1,100,N,N,N,CP_Drtn,TT_Task,DT_FixedDUR2,RV_OK,TK_Complete,4229EPR160,T.E.R for PSV,,,,0,0,0,0,160,0,0,0,,2011-11-17 00:00,2012-01-31 00:00,2012-12-24 08:00,2012-12-24 08:00,,2012-06-02 00:00,2012-06-02 00:00,,,2011-11-16 08:00,2011-12-13 16:00,,,,,PT_Normal,,,,,Cz/MYbccnUW6Pjr3gjZPpA,QZSem8n3HEqSrXo4nZ4rrA,,,N,0,0,,,2012-06-19 11:46,2012-06-20 10:09,admin,admin,,,
505,82763,773,10509,849,1,100,N,N,N,CP_Drtn,TT_Task,DT_FixedDUR2,RV_OK,TK_Complete,4229EPR170,MRP for PSV,,,,0,0,0,0,40,0,0,0,,2012-04-05 00:00,2012-04-09 00:00,2012-12-24 08:00,2012-12-24 08:00,,2012-06-02 00:00,2012-06-02 00:00,,,2012-04-09 08:00,2012-04-15 16:00,,,,,PT_Normal,,,,,/xecUDHdz0CpOugFRbzLaw,ulMsewoMhEiApbF+oxOLEA,,,N,0,0,,,2012-06-19 11:46,2012-06-20 10:09,admin,admin,,,
506,82764,773,10509,849,1,100,N,N,N,CP_Drtn,TT_Task,DT_FixedDUR2,RV_OK,TK_Complete,4229EPR60,Issue MRQ for PSV,,,,0,0,0,0,40,0,0,0,,2011-10-09 08:00,2011-10-19 00:00,2012-12-24 08:00,2012-12-24 08:00,,2012-06-02 00:00,2012-06-02 00:00,,,2011-10-09 08:00,2011-10-13 16:00,,,,,PT_Normal,,,,,wD3MgckQT0Kp1I0du631iQ,oARo+yhXM0mbfyeEpyVYrw,,,N,0,0,,,2012-06-19 11:46,2012-06-20 10:09,admin,admin,,,
507,82765,773,10509,849,1,100,N,N,N,CP_Drtn,TT_Task,DT_FixedDUR2,RV_OK,TK_Complete,4229EPR10,Issue MRQ for Chemical injection,,,,0,0,0,0,56,0,0,0,,2011-08-16 08:00,2011-08-24 16:00,2012-12-24 08:00,2012-12-24 08:00,,2012-06-02 00:00,2012-06-02 00:00,,,2011-08-16 08:00,2011-08-24 16:00,,,,,PT_Normal,,,,,OolNd+jP20+yAe6ZNw6bMg,,,,N,0,0,,,2012-06-19 11:46,2012-06-20 10:09,admin,admin,,,
508,82766,773,10496,849,1,100,N,N,N,CP_Drtn,TT_Task,DT_FixedDUR2,RV_OK,TK_Complete,4229EPR90,C&E -Approval,,,,0,0,0,0,64,0,0,0,,2011-10-26 00:00,2011-11-23 16:00,2013-08-13 08:00,2013-08-13 08:00,,2012-06-02 00:00,2012-06-02 00:00,,,2011-10-30 08:00,2011-11-15 16:00,,,,,PT_Normal,,,,,smWwe7qnFkeC7XSGXjzj+Q,,,,N,0,0,,,2012-06-19 11:46,2012-06-20 10:09,admin,admin,,,
509,82767,773,10496,849,1,100,N,N,N,CP_Drtn,TT_Task,DT_FixedDUR2,RV_OK,TK_Complete,4229EPR130,C&E -Design,,,,0,0,0,0,64,0,0,0,,2011-12-01 00:00,2011-12-11 08:00,2013-08-13 08:00,2013-08-13 08:00,,2012-06-02 00:00,2012-06-02 00:00,,,2011-12-18 08:00,2011-12-27 16:00,,,,,PT_Normal,,,,,KJNVt8pnEk+35x919k5YNw,,,,N,0,0,,,2012-06-19 11:46,2012-06-20 10:09,admin,admin,,,
510,82768,773,10496,849,1,0,N,N,N,CP_Drtn,TT_Task,DT_FixedDUR2,RV_OK,TK_NotStart,4229EPR200,C&E -Construction,,2328,0,64,0,0,0,64,0,0,0,,,,2013-08-26 08:00,2013-09-04 16:00,,2012-07-01 08:00,2012-07-10 16:00,2012-07-01 08:00,2012-07-10 16:00,2012-07-01 08:00,2012-07-10 16:00,,2013-08-26 08:00,2013-09-04 16:00,,PT_Normal,,,,,RfkyoUPXEUKNyXpqi40j7Q,,,,N,0,0,,,2012-06-19 11:46,2012-06-20 09:59,admin,admin,,,
511,82769,773,10496,849,1,100,N,N,N,CP_Drtn,TT_Task,DT_FixedDUR2,RV_OK,TK_Complete,4229EPR270,GUPCO approval on PFD's & material balance,,,,0,0,0,0,80,0,0,0,,2011-09-29 08:00,2011-10-24 00:00,2013-04-15 08:00,2013-04-15 08:00,,2012-06-02 00:00,2012-06-02 00:00,,,2011-09-29 08:00,2011-10-13 16:00,,,,,PT_Normal,,,,,QYUTHKO6xEOOWMhp+SIfyw,,,,N,0,0,,,2012-06-19 11:46,2012-06-20 10:09,admin,admin,,,
512,82770,773,10496,849,1,100,N,N,N,CP_Drtn,TT_Task,DT_FixedDUR2,RV_OK,TK_Complete,4229EPR280,GUPCO approval on P&ID'S / Equipment list,,,,0,0,0,0,80,0,0,0,,2011-10-24 00:00,2011-11-22 00:00,2013-04-15 08:00,2013-04-15 08:00,,2012-06-02 00:00,2012-06-02 00:00,,,2011-10-30 08:00,2011-11-17 16:00,,,,,PT_Normal,,,,,s5CSqorWvECZdfOLGCge0A,1xx29x7gQw6UEWuqC1JfgA,,,N,0,0,,,2012-06-19 11:46,2012-06-20 10:09,admin,admin,,,
513,82771,773,10496,849,1,100,N,N,N,CP_Drtn,TT_Task,DT_FixedDUR2,RV_OK,TK_Complete,4229EPR290,GUPCO approval on cause & effect,,,,0,0,0,0,80,0,0,0,,2011-11-24 00:00,2011-12-01 00:00,2013-08-13 08:00,2013-08-13 08:00,,2012-06-02 00:00,2012-06-02 00:00,,,2011-11-03 08:00,2011-11-23 16:00,,,,,PT_Normal,,,,,cbWuY4wqzEio0O45HRDUBw,,,,N,0,0,,,2012-06-19 11:46,2012-06-20 10:09,admin,admin,,,
514,82772,773,10496,849,1,100,N,N,N,CP_Drtn,TT_Task,DT_FixedDUR2,RV_OK,TK_Complete,4229EPR20,Isuue PFD's / UFD's & material balance -Approval,,,,0,0,0,0,104,0,0,0,,2011-09-12 08:00,2011-09-27 00:00,2012-12-24 08:00,2012-12-24 08:00,,2012-06-02 00:00,2012-06-02 00:00,,,2011-09-12 08:00,2011-09-28 16:00,,,,,PT_Normal,,,,,yYT+TT4lyka2BL/XCtuDrw,4+V64hr8QGaVcGgwUXQVsA,,,N,0,0,,,2012-06-19 11:46,2012-06-20 10:09,admin,admin,,,
515,82773,773,10496,849,1,100,N,N,N,CP_Drtn,TT_Task,DT_FixedDUR2,RV_OK,TK_Complete,4229EPR40,Issue P&ID'S / Equipment list-Approval,,,,0,0,0,0,80,0,0,0,,2011-09-28 00:00,2011-10-25 00:00,2013-03-07 08:00,2013-03-07 08:00,,2012-06-02 00:00,2012-06-02 00:00,,,2011-09-28 08:00,2011-10-12 16:00,,,,,PT_Normal,,,,,2h2pfyiiNUuSgy9JZAj6+A,bW1BefXsQ8qWdnGis0iRXg,,,N,0,0,,,2012-06-19 11:46,2012-06-20 10:09,admin,admin,,,
516,82774,773,10496,849,1,0,N,N,N,CP_Drtn,TT_Task,DT_FixedDUR2,RV_OK,TK_NotStart,4229EPR180,Issue P&ID'S / Equipment list-Construction,,1088,0,120,0,0,0,120,0,0,0,,,,2012-12-31 08:00,2013-01-20 16:00,,2012-06-10 08:00,2012-06-28 16:00,2012-06-10 08:00,2012-06-28 16:00,2012-06-10 08:00,2012-06-28 16:00,,2012-12-31 08:00,2013-01-20 16:00,,PT_Normal,,,,,F5kT8UspdkKGIpq5/Auh3g,0PYR8E0oSzmyuW10YXrt8A,,,N,0,0,,,2012-06-19 11:46,2012-06-20 09:59,admin,admin,,,
517,82775,773,10496,849,1,100,N,N,N,CP_Drtn,TT_Task,DT_FixedDUR2,RV_OK,TK_Complete,4229EPR80,Isuue PFD's / UFD's  & material balance -Design,,,,0,0,0,0,56,0,0,0,,2011-10-25 00:00,2011-10-30 16:00,2013-04-15 08:00,2013-04-15 08:00,,2012-06-02 00:00,2012-06-02 00:00,,,2011-10-16 08:00,2011-10-24 16:00,,,,,PT_Normal,,,,,yuGHZdcBgUu6qP0dDgLLWQ,ikkxFXoDQymD74BDpjE9Cw,,,N,0,0,,,2012-06-19 11:46,2012-06-20 10:09,admin,admin,,,
518,82776,773,10496,849,1,100,N,N,N,CP_Drtn,TT_Task,DT_FixedDUR2,RV_OK,TK_Complete,4229EPR120,Issue P&ID'S / Equipment list-Design,,,,0,0,0,0,80,0,0,0,,2011-11-23 00:00,2011-12-06 00:00,2013-04-15 08:00,2013-04-15 08:00,,2012-06-02 00:00,2012-06-02 00:00,,,2011-11-14 08:00,2011-11-27 16:00,,,,,PT_Normal,,,,,Cm+5K0qbF0qqt/gglHPrHw,y4kSxUB0QgmwrKOKSq45nQ,,,N,0,0,,,2012-06-19 11:46,2012-06-20 10:09,admin,admin,,,
519,82777,773,10496,849,1,0,N,N,N,CP_Drtn,TT_Task,DT_FixedDUR2,RV_OK,TK_Active,4229EPR190,Isuue PFD's / UFD's & material balance -Construction,,2440,0,8,0,0,0,80,0,0,0,,2012-04-19 00:00,,2013-09-19 08:00,2013-09-19 16:00,2012-06-03 16:00,2012-07-05 08:00,2012-07-05 16:00,2012-07-05 08:00,2012-07-05 16:00,2012-06-20 08:00,2012-07-03 16:00,,2013-09-19 08:00,2013-09-19 16:00,,PT_Normal,,,,,akfg9ajUDkOm9OZg2Uy7cg,,,,N,0,0,,,2012-06-19 11:46,2012-06-20 09:59,admin,admin,,,
520,82778,773,10496,849,1,100,N,N,N,CP_Drtn,TT_Task,DT_FixedDUR2,RV_OK,TK_Complete,4229EPR320,Issue P&ID'S implementing HAZOP,,,,0,0,0,0,80,0,0,0,,2012-02-12 00:00,2012-03-12 00:00,2013-09-26 16:00,2013-09-26 16:00,,2012-06-02 00:00,2012-06-02 00:00,,,2012-03-18 08:00,2012-03-29 16:00,,,,,PT_Normal,,,,,RBzYLWwcSUeDvnbzsgdWmw,,,,N,0,0,,,2012-06-19 11:46,2012-06-20 10:09,admin,admin,,,
521,82779,773,10498,849,1,0,N,N,N,CP_Drtn,TT_Task,DT_FixedDUR2,RV_OK,TK_NotStart,4229EPI280,Issue GA's / ISO's -construction(Second batch)- Final MTO,,1088,0,120,0,0,0,120,0,0,0,,,,2013-02-25 08:00,2013-03-17 16:00,,2012-08-05 08:00,2012-08-30 16:00,2012-08-05 08:00,2012-08-30 16:00,2012-08-05 08:00,2012-08-30 16:00,,2013-02-25 08:00,2013-03-17 16:00,,PT_Normal,,,,,etQvozzZ/EKOw4fvZ+bSEw,,,,N,0,0,,,2012-06-19 11:46,2012-06-20 09:59,admin,admin,,,
522,82780,773,10498,849,1,100,N,N,N,CP_Drtn,TT_Task,DT_FixedDUR2,RV_OK,TK_Complete,4229EPI40,Issue plot plans-Approval,,,,0,0,0,0,80,0,0,0,,2011-10-26 00:00,2011-11-21 00:00,2013-03-07 08:00,2013-03-07 08:00,,2012-06-02 00:00,2012-06-02 00:00,,,2011-12-04 08:00,2011-12-15 16:00,,,,,PT_Normal,,,,,nPG+s0yBIEK7lkJ2nqRTPg,ZsEQ0tICRLeOA9EICN0T6Q,,,N,0,0,,,2012-06-19 11:46,2012-06-20 10:09,admin,admin,,,
523,82781,773,10498,849,1,100,N,N,N,CP_Drtn,TT_Task,DT_FixedDUR2,RV_OK,TK_Complete,4229EPI80,Issue plot plans-Design,,,,0,0,0,0,120,0,0,0,,2011-12-20 08:00,2012-01-05 16:00,2013-04-15 08:00,2013-04-15 08:00,,2012-06-02 00:00,2012-06-02 00:00,,,2011-12-20 08:00,2012-01-09 16:00,,,,,PT_Normal,,,,,MmvcMKrxH0aWskf237iS+w,cr+Ze/sDR+mGSVpxpwrL0A,,,N,0,0,,,2012-06-19 11:46,2012-06-20 10:09,admin,admin,,,
524,82782,773,10498,849,1,0,N,N,N,CP_Drtn,TT_Task,DT_FixedDUR2,RV_OK,TK_NotStart,4229EPI160,Issue plot plans-Construction,,1088,0,120,0,0,0,120,0,0,0,,,,2013-01-21 08:00,2013-02-10 16:00,,2012-07-01 08:00,2012-07-19 16:00,2012-07-01 08:00,2012-07-19 16:00,2012-07-01 08:00,2012-07-19 16:00,,2013-01-21 08:00,2013-02-10 16:00,,PT_Normal,,,,,kIF6WW722EWfmDsorpbRHQ,FxwlrL7cRzuyVKm0cFtT9w,,,N,0,0,,,2012-06-19 11:46,2012-06-20 09:59,admin,admin,,,
525,82783,773,10498,849,1,0,N,N,N,CP_Drtn,TT_Task,DT_FixedDUR2,RV_OK,TK_NotStart,4229EPI190,Issue GA's / ISO's -construction(first batch),,1088,0,80,0,0,0,80,0,0,0,,,,2013-02-11 08:00,2013-02-24 16:00,,2012-07-22 08:00,2012-08-02 16:00,2012-07-22 08:00,2012-08-02 16:00,2012-07-22 08:00,2012-08-02 16:00,,2013-02-11 08:00,2013-02-24 16:00,,PT_Normal,,,,,Fj4OQeJjPUy8NWQVyiUjiQ,1kARNwTqSjCYW0jNvbH2rQ,,,N,0,0,,,2012-06-19 11:46,2012-06-20 09:59,admin,admin,,,
526,82784,773,10498,849,1,100,N,N,N,CP_Drtn,TT_Task,DT_FixedDUR2,RV_OK,TK_Complete,4229EPI100,Issue GA's -Approval,,,,0,0,0,0,224,0,0,0,,2011-12-22 00:00,2012-01-17 16:00,2013-09-24 08:00,2013-09-24 08:00,,2012-06-02 00:00,2012-06-02 00:00,,,2012-01-01 08:00,2012-02-08 16:00,,,,,PT_Normal,,,,,IykRWWrhUUCDcMHkw+psPQ,,,,N,0,0,,,2012-06-19 11:46,2012-06-20 10:09,admin,admin,,,
527,82785,773,10498,849,1,100,N,N,N,CP_Drtn,TT_Task,DT_FixedDUR2,RV_OK,TK_Complete,4229EPI130,Issue GA's -Design,,,,0,0,0,0,160,0,0,0,,2012-02-02 00:00,2012-02-16 00:00,2013-04-15 08:00,2013-04-15 08:00,,2012-06-02 00:00,2012-06-02 00:00,,,2012-01-29 08:00,2012-02-23 16:00,,,,,PT_Normal,,,,,/OAmtDVjb0OsQRmbXDDvaQ,,,,N,0,0,,,2012-06-19 11:46,2012-06-20 10:09,admin,admin,,,
528,82786,773,10498,849,1,0,N,N,N,CP_Drtn,TT_Task,DT_FixedDUR2,RV_OK,TK_NotStart,4229EPI220,Piping supports list / MTO -IFC,,2120,0,80,0,0,0,80,0,0,0,,,,2013-09-08 08:00,2013-09-19 16:00,,2012-08-26 08:00,2012-09-06 16:00,2012-08-26 08:00,2012-09-06 16:00,2012-08-26 08:00,2012-09-06 16:00,,2013-09-08 08:00,2013-09-19 16:00,,PT_Normal,,,,,f2bJ//E0VEKNm+jZoctggg,,,,N,0,0,,,2012-06-19 11:46,2012-06-20 09:59,admin,admin,,,
529,82787,773,10498,849,1,100,N,N,N,CP_Drtn,TT_Task,DT_FixedDUR2,RV_OK,TK_Complete,4229EPI20,Line designation table -Approval,,,,0,0,0,0,48,0,0,0,,2011-10-24 00:00,2012-01-02 16:00,2013-09-26 16:00,2013-09-26 16:00,,2012-06-02 00:00,2012-06-02 00:00,,,2011-10-30 08:00,2011-11-13 16:00,,,,,PT_Normal,,,,,WufcOEJWPEGEyqEub1G7kA,,,,N,0,0,,,2012-06-19 11:46,2012-06-20 10:09,admin,admin,,,
530,82788,773,10498,849,1,100,N,N,N,CP_Drtn,TT_Task,DT_FixedDUR2,RV_OK,TK_Complete,4229EPI120,Line designation table -Design,,,,0,0,0,0,64,0,0,0,,2012-01-10 08:00,2012-01-24 00:00,2013-09-26 16:00,2013-09-26 16:00,,2012-06-02 00:00,2012-06-02 00:00,,,2012-01-10 08:00,2012-01-19 16:00,,,,,PT_Normal,,,,,PUtbGJIu3UCx65cgachsKw,,,,N,0,0,,,2012-06-19 11:46,2012-06-20 10:09,admin,admin,,,
531,82789,773,10498,849,1,0,N,N,N,CP_Drtn,TT_Task,DT_FixedDUR2,RV_OK,TK_NotStart,4229EPI180,Line designation table -Construction,,2376,0,64,0,0,0,64,0,0,0,,,,2013-09-03 08:00,2013-09-12 16:00,,2012-07-01 08:00,2012-07-10 16:00,2012-07-01 08:00,2012-07-10 16:00,2012-07-01 08:00,2012-07-10 16:00,,2013-09-03 08:00,2013-09-12 16:00,,PT_Normal,,,,,ABrqN+bNXEyjZi2A7SYVGA,,,,N,0,0,,,2012-06-19 11:46,2012-06-20 09:59,admin,admin,,,
532,82790,773,10498,849,1,0,N,N,N,CP_Drtn,TT_Task,DT_FixedDUR2,RV_OK,TK_NotStart,4229EPI170,Hydrotest maps & loops- Construction,,2312,1016,120,0,0,0,120,0,0,0,,,,2013-09-08 08:00,2013-09-26 16:00,,2012-07-16 08:00,2012-08-05 16:00,2012-07-16 08:00,2012-08-05 16:00,2012-07-16 08:00,2012-08-05 16:00,,2013-09-08 08:00,2013-09-26 16:00,,PT_Normal,,,,,Tdkl/3TfEUSpRywARIX69w,,,,N,0,0,,,2012-06-19 11:46,2012-06-20 09:59,admin,admin,,,
533,82791,773,10498,849,1,0,N,N,N,CP_Drtn,TT_Task,DT_FixedDUR2,RV_OK,TK_NotStart,4229EPI230,Standard pipe supports -Construction,,2200,904,40,0,0,0,40,0,0,0,,,,2013-09-22 08:00,2013-09-26 16:00,,2012-08-26 08:00,2012-08-30 16:00,2012-08-26 08:00,2012-08-30 16:00,2012-08-26 08:00,2012-08-30 16:00,,2013-09-22 08:00,2013-09-26 16:00,,PT_Normal,,,,,pa7ZvS410U2aRxwyTfPnwQ,,,,N,0,0,,,2012-06-19 11:46,2012-06-20 09:59,admin,admin,,,
534,82792,773,10498,849,1,100,N,N,N,CP_Drtn,TT_Task,DT_FixedDUR2,RV_OK,TK_Complete,4229EPI240,Piping & Valves classes - Approval (Deleted),,,,0,0,0,0,40,0,0,0,,2011-10-24 00:00,2011-12-06 00:00,2013-09-26 16:00,2013-09-26 16:00,,2012-06-02 00:00,2012-06-02 00:00,,,2011-10-30 08:00,2011-11-03 16:00,,,,,PT_Normal,,,,,nVSsAiaUc0yl1oyFRulM+Q,,,,N,0,0,,,2012-06-19 11:46,2012-06-20 10:09,admin,admin,,,
535,82793,773,10498,849,1,0,N,N,N,CP_Drtn,TT_Task,DT_FixedDUR2,RV_OK,TK_NotStart,4229EPI250,Critical line list-Construction,,2376,1080,80,0,0,0,80,0,0,0,,,,2013-09-15 08:00,2013-09-26 16:00,,2012-07-11 08:00,2012-07-24 16:00,2012-07-11 08:00,2012-07-24 16:00,2012-07-11 08:00,2012-07-24 16:00,,2013-09-15 08:00,2013-09-26 16:00,,PT_Normal,,,,,DdANT7AryE2dxyB89+620A,,,,N,0,0,,,2012-06-19 11:46,2012-06-20 09:59,admin,admin,,,
536,82794,773,10498,849,1,100,N,N,N,CP_Drtn,TT_Task,DT_FixedDUR2,RV_OK,TK_Complete,4229EPI260,Piping & Valves classes - Design,,,,0,0,0,0,40,0,0,0,,2011-10-24 00:00,2011-12-06 00:00,2013-09-26 16:00,2013-09-26 16:00,,2012-06-02 00:00,2012-06-02 00:00,,,2011-12-08 08:00,2011-12-14 16:00,,,,,PT_Normal,,,,,VeSmPHmtEUq8JbZR8xJkFg,,,,N,0,0,,,2012-06-19 11:46,2012-06-20 10:09,admin,admin,,,
537,82795,773,10498,849,1,0,N,N,N,CP_Drtn,TT_Task,DT_FixedDUR2,RV_OK,TK_NotStart,4229EPI270,Piping & Valves classes - Construction,,2480,1184,40,0,0,0,40,0,0,0,,,,2013-09-22 08:00,2013-09-26 16:00,,2012-07-01 08:00,2012-07-05 16:00,2012-07-01 08:00,2012-07-05 16:00,2012-07-01 08:00,2012-07-05 16:00,,2013-09-22 08:00,2013-09-26 16:00,,PT_Normal,,,,,+Go4fYANz0Gj5fxDBjdsKQ,,,,N,0,0,,,2012-06-19 11:46,2012-06-20 09:59,admin,admin,,,
538,82796,773,10513,849,1,100,N,N,N,CP_Drtn,TT_Task,DT_FixedDUR2,RV_OK,TK_Complete,4229EPI310,Additional piping bulk MRQ,,,,0,0,0,0,120,0,0,0,,2012-04-15 00:00,2012-05-16 00:00,2013-02-05 08:00,2013-02-05 08:00,,2012-06-02 00:00,2012-06-02 00:00,,,2012-04-29 08:00,2012-05-17 16:00,,,,,PT_Normal,,,,,oCn5PsuGNkCK3EX6+xg5hw,,,,N,0,0,,,2012-06-19 11:46,2012-06-20 10:09,admin,admin,,,
539,82797,773,10513,849,1,0,N,N,N,CP_Drtn,TT_Task,DT_FixedDUR2,RV_OK,TK_NotStart,4229EPI320,Additional piping bulk T.E.R,,1344,0,160,0,0,0,160,0,0,0,,,,2013-02-14 08:00,2013-03-13 16:00,,2012-06-11 08:00,2012-07-08 16:00,2012-06-11 08:00,2012-07-08 16:00,2012-06-11 08:00,2012-07-08 16:00,,2013-02-14 08:00,2013-03-13 16:00,,PT_Normal,,,,,Fq/jWyx9G021Kc0+BcgbPg,,,,N,0,0,,,2012-06-19 11:46,2012-06-20 09:59,admin,admin,,,
540,82798,773,10513,849,1,0,N,N,N,CP_Drtn,TT_Task,DT_FixedDUR2,RV_OK,TK_NotStart,4229EPI330,Additional piping bulk MRP,,2200,0,40,0,0,0,40,0,0,0,,,,2013-09-11 08:00,2013-09-17 16:00,,2012-08-08 08:00,2012-08-14 16:00,2012-08-08 08:00,2012-08-14 16:00,2012-08-08 08:00,2012-08-14 16:00,,2013-09-11 08:00,2013-09-17 16:00,,PT_Normal,,,,,aCspH91ywkGrvcU1hTpmLQ,,,,N,0,0,,,2012-06-19 11:46,2012-06-20 09:59,admin,admin,,,
541,82799,773,10513,849,1,100,N,N,N,CP_Drtn,TT_Task,DT_FixedDUR2,RV_OK,TK_Complete,4229EPI340,"Issue MRQ for Gate, Globe & butterfly valves",,,,0,0,0,0,8,0,0,0,,2011-11-24 00:00,2011-12-08 00:00,2013-09-26 16:00,2013-09-26 16:00,,2012-06-02 00:00,2012-06-02 00:00,,,2012-04-29 08:00,2012-04-29 16:00,,,,,PT_Normal,,,,,+eApluIJ4UeVlEFqNkAIYw,,,,N,0,0,,,2012-06-19 11:46,2012-06-20 10:09,admin,admin,,,
542,82800,773,10513,849,1,100,N,N,N,CP_Drtn,TT_Task,DT_FixedDUR2,RV_OK,TK_Complete,4229EPI60,Issue MRQ for Piping bulk,,,,0,0,0,0,64,0,0,0,,2011-11-15 00:00,2011-11-24 00:00,2013-06-13 08:00,2013-06-13 08:00,,2012-06-02 00:00,2012-06-02 00:00,,,2011-12-04 08:00,2011-12-13 16:00,,,,,PT_Normal,,,,,wIwm5UFXYkiM48OcpIuYiA,oARo+yhXM0mbfyeEpyVYrw,,,N,0,0,,,2012-06-19 11:46,2012-06-20 10:09,admin,admin,,,
543,82801,773,10513,849,1,100,N,N,N,CP_Drtn,TT_Task,DT_FixedDUR2,RV_OK,TK_Complete,4229EPI110,"T.E.R for Piping Gate, Globe & Butterfly valves",,,,0,0,0,0,160,0,0,0,2012-01-12 00:00,2012-01-12 08:00,2012-02-08 00:00,2013-01-14 08:00,2013-01-14 08:00,,2012-06-02 00:00,2012-06-02 00:00,,,2012-01-12 08:00,2012-02-09 16:00,,,,CS_MSOA,PT_Normal,,,,,g7h42Q7EDEiWVhkprACsfw,+adQvSlUzkOZha6HG7fiRA,,,N,0,0,,,2012-06-19 11:46,2012-06-20 10:09,admin,admin,,,
544,82802,773,10513,849,1,100,N,N,N,CP_Drtn,TT_Task,DT_FixedDUR2,RV_OK,TK_Complete,4229EPI150,"MRP for Piping Gate, Globe & Butterfly valves",,,,0,0,0,0,40,0,0,0,,2012-04-08 00:00,2012-04-12 00:00,2013-01-14 08:00,2013-01-14 08:00,,2012-06-02 00:00,2012-06-02 00:00,,,2012-04-12 08:00,2012-04-18 16:00,,,,,PT_Normal,,,,,Pc8icjMbB0Sib2AugP3AnA,uCQ7t7XtkE2pu5tmschigw,,,N,0,0,,,2012-06-19 11:46,2012-06-20 10:09,admin,admin,,,
545,82803,773,10513,849,1,100,N,N,N,CP_Drtn,TT_Task,DT_FixedDUR2,RV_OK,TK_Complete,4229EPI50,Issue MRQ for Ball valves,,,,0,0,0,0,40,0,0,0,,2011-11-24 00:00,2011-12-08 00:00,2013-05-26 08:00,2013-05-26 08:00,,2012-06-02 00:00,2012-06-02 00:00,,,2011-12-04 08:00,2011-12-08 16:00,,,,,PT_Normal,,,,,6oopCtBGuEaRHbMa6a5mbQ,fa+QQs2lrkWif6ZY5ZmI+Q,,,N,0,0,,,2012-06-19 11:46,2012-06-20 10:09,admin,admin,,,
546,82804,773,10513,849,1,100,N,N,N,CP_Drtn,TT_Task,DT_FixedDUR2,RV_OK,TK_Complete,4229EPI10,Issue MRQ for L&R traps,,,,0,0,0,0,56,0,0,0,,2011-08-15 08:00,2011-08-23 16:00,2012-12-30 08:00,2012-12-30 08:00,,2012-06-02 00:00,2012-06-02 00:00,,,2011-08-15 08:00,2011-08-23 16:00,,,,,PT_Normal,,,,,U/274V+00UenCR3NkD9pAw,,,,N,0,0,,,2012-06-19 11:46,2012-06-20 10:09,admin,admin,,,
547,82805,773,10513,849,1,100,N,N,N,CP_Drtn,TT_Task,DT_FixedDUR2,RV_OK,TK_Complete,4229EPI30,T.E.R for L&R,,,,0,0,0,0,120,0,0,0,,2011-09-22 08:00,2011-12-04 00:00,2012-12-30 08:00,2012-12-30 08:00,,2012-06-02 00:00,2012-06-02 00:00,,,2011-09-22 08:00,2011-10-13 16:00,,,,,PT_Normal,,,,,t1G/rTNUEUah9+Gb9HldHw,ErUDIEAHkEWZWIjcmb+Ptg,,,N,0,0,,,2012-06-19 11:46,2012-06-20 10:09,admin,admin,,,
548,82806,773,10513,849,1,100,N,N,N,CP_Drtn,TT_Task,DT_FixedDUR2,RV_OK,TK_Complete,4229EPI70,MRP for L&R,,,,0,0,0,0,40,0,0,0,,2012-02-09 00:00,2012-02-20 00:00,2012-12-30 08:00,2012-12-30 08:00,,2012-06-02 00:00,2012-06-02 00:00,,,2012-03-04 08:00,2012-03-08 16:00,,,,,PT_Normal,,,,,fSWEmuKyF0iEogWvfVVyUw,,,,N,0,0,,,2012-06-19 11:46,2012-06-20 10:09,admin,admin,,,
549,82807,773,10513,849,1,0,N,N,N,CP_Drtn,TT_Task,DT_FixedDUR2,RV_OK,TK_Active,4229EPI210,V.P.R for launcher & receiver traps,,2032,296,640,0,0,0,640,0,0,0,,2012-03-27 00:00,,2013-06-09 08:00,2013-09-26 16:00,,2012-06-04 08:00,2012-09-30 16:00,2012-06-04 08:00,2012-09-30 16:00,2012-03-25 08:00,2012-07-12 16:00,,2013-06-09 08:00,2013-09-26 16:00,,PT_Normal,,,,,hJB7T7YcCkuJJCmVs/ZcUA,,,,N,0,0,,,2012-06-19 11:46,2012-06-20 09:59,admin,admin,,,
550,82808,773,10513,849,1,100,N,N,N,CP_Drtn,TT_Task,DT_FixedDUR2,RV_OK,TK_Complete,A1000,Thermal insulation specification,,,,0,0,0,0,40,0,0,0,,2011-11-21 00:00,2011-11-24 00:00,2013-09-26 16:00,2013-09-26 16:00,,2012-06-02 00:00,2012-06-02 00:00,,,2011-12-04 08:00,2011-12-08 16:00,,,,,PT_Normal,,,,,Q78n25y+wEWZP1kCBrW02A,,,,N,0,0,,,2012-06-19 11:46,2012-06-20 10:09,admin,admin,,,
551,82809,773,10513,849,1,100,N,N,N,CP_Drtn,TT_Task,DT_FixedDUR2,RV_OK,TK_Complete,A1010,Piping fabrication and erection specification,,,,0,0,0,0,40,0,0,0,,2011-11-21 00:00,2011-11-27 00:00,2013-09-26 16:00,2013-09-26 16:00,,2012-06-02 00:00,2012-06-02 00:00,,,2011-12-04 08:00,2011-12-08 16:00,,,,,PT_Normal,,,,,6u74DTlwsEG4/MUxq49/Ew,,,,N,0,0,,,2012-06-19 11:46,2012-06-20 10:09,admin,admin,,,
552,82810,773,10513,849,1,100,N,N,N,CP_Drtn,TT_Task,DT_FixedDUR2,RV_OK,TK_Complete,A1020,Field test of piping specification.,,,,0,0,0,0,40,0,0,0,,2011-11-21 00:00,2011-11-24 00:00,2013-09-26 16:00,2013-09-26 16:00,,2012-06-02 00:00,2012-06-02 00:00,,,2011-12-11 08:00,2011-12-15 16:00,,,,,PT_Normal,,,,,xGVPY5F2oUOnPAAv5YTy+A,,,,N,0,0,,,2012-06-19 11:46,2012-06-20 10:09,admin,admin,,,
553,82811,773,10513,849,1,100,N,N,N,CP_Drtn,TT_Task,DT_FixedDUR2,RV_OK,TK_Complete,4229EPI90,T.E.R for Piping bulk,,,,0,0,0,0,120,0,0,0,,2011-12-22 00:00,2012-01-26 00:00,2013-06-13 08:00,2013-06-13 08:00,,2012-06-02 00:00,2012-06-02 00:00,,,2011-12-13 08:00,2012-01-02 16:00,,,,,PT_Normal,,,,,PIHfN3mB9E6HSq4ogxjWmg,QZSem8n3HEqSrXo4nZ4rrA,,,N,0,0,,,2012-06-19 11:46,2012-06-20 10:09,admin,admin,,,
554,82812,773,10513,849,1,100,N,N,N,CP_Drtn,TT_Task,DT_FixedDUR2,RV_OK,TK_Complete,4229EPI140,MRP for Piping bulk,,,,0,0,0,0,40,0,0,0,,2012-03-19 00:00,2012-03-27 16:00,2013-06-13 08:00,2013-06-13 08:00,,2012-06-02 00:00,2012-06-02 00:00,,,2012-03-20 08:00,2012-03-26 16:00,,,,,PT_Normal,,,,,iJvdSBu2UkaVSzhozd+DBg,ulMsewoMhEiApbF+oxOLEA,,,N,0,0,,,2012-06-19 11:46,2012-06-20 10:09,admin,admin,,,
555,82813,773,10513,849,1,100,N,N,N,CP_Drtn,TT_Task,DT_FixedDUR2,RV_OK,TK_Complete,4229EPI290,T.E.R for Piping Ball Valves,,,,0,0,0,0,168,0,0,0,,2012-01-12 00:00,2012-02-13 00:00,2013-05-26 08:00,2013-05-26 08:00,,2012-06-02 00:00,2012-06-02 00:00,,,2012-03-04 08:00,2012-04-01 16:00,,,,,PT_Normal,,,,,WG1oMdewU0Oaa/I1R5ckoA,,,,N,0,0,,,2012-06-19 11:46,2012-06-20 10:09,admin,admin,,,
556,82814,773,10513,849,1,100,N,N,N,CP_Drtn,TT_Task,DT_FixedDUR2,RV_OK,TK_Complete,4229EPI300,MRP for Piping Ball Valves,,,,0,0,0,0,88,0,0,0,,2012-04-08 00:00,2012-04-12 00:00,2013-05-26 08:00,2013-05-26 08:00,,2012-06-02 00:00,2012-06-02 00:00,,,2012-04-12 08:00,2012-04-26 16:00,,,,,PT_Normal,,,,,71PYAW1keUy7F/ZPCu+NRQ,,,,N,0,0,,,2012-06-19 11:46,2012-06-20 10:09,admin,admin,,,
557,82815,773,10500,849,1,0,N,N,N,CP_Drtn,TT_Task,DT_FixedDUR2,RV_OK,TK_Active,4229EPI200,Stress analysis report,,2232,0,48,0,0,0,152,0,0,0,,2012-05-24 00:00,,2013-08-29 08:00,2013-09-05 16:00,2012-07-29 16:00,2012-07-22 08:00,2012-07-29 16:00,2012-07-22 08:00,2012-07-29 16:00,2012-07-03 08:00,2012-07-29 16:00,,2013-08-29 08:00,2013-09-05 16:00,,PT_Normal,,,,,dohuRLbZa02ozAyuGAGCzw,,,,N,0,0,,,2012-06-19 11:46,2012-06-20 09:59,admin,admin,,,
558,82816,773,10502,849,1,100,N,N,N,CP_Drtn,TT_Task,DT_FixedDUR2,RV_OK,TK_Complete,4229EME30,Motor load list IFA,,,,0,0,0,0,40,0,0,0,,2011-10-24 00:00,2011-11-16 00:00,2013-09-15 08:00,2013-09-15 08:00,,2012-06-02 00:00,2012-06-02 00:00,,,2011-10-13 08:00,2011-10-19 16:00,,,,,PT_Normal,,,,,DylGi8t9DUiho2aylO2KNQ,,,,N,0,0,,,2012-06-19 11:46,2012-06-20 10:09,admin,admin,,,
559,82817,773,10502,849,1,0,N,N,N,CP_Drtn,TT_Task,DT_FixedDUR2,RV_OK,TK_NotStart,4229EME70,Final Motor load list,,2360,0,40,0,0,0,40,0,0,0,,,,2013-09-01 08:00,2013-09-05 16:00,,2012-07-01 08:00,2012-07-05 16:00,2012-07-01 08:00,2012-07-05 16:00,2012-07-01 08:00,2012-07-05 16:00,,2013-09-01 08:00,2013-09-05 16:00,,PT_Normal,,,,,LoDS5yV/kkGmwol1akEafQ,,,,N,0,0,,,2012-06-19 11:46,2012-06-20 09:59,admin,admin,,,
560,82818,773,10502,849,1,100,N,N,N,CP_Drtn,TT_Task,DT_FixedDUR2,RV_OK,TK_Complete,4229EME20,Material selection Guide IFA,,,,0,0,0,0,112,0,0,0,,2011-09-25 08:00,2011-10-27 00:00,2013-09-26 16:00,2013-09-26 16:00,,2012-06-02 00:00,2012-06-02 00:00,,,2011-09-25 08:00,2011-10-13 16:00,,,,,PT_Normal,,,,,YoPXFK7lgUyXA93mvHLFCQ,fS2yCILzQ1+s4v+Esy3IrA,,,N,0,0,,,2012-06-19 11:46,2012-06-20 10:09,admin,admin,,,
561,82819,773,10502,849,1,100,N,N,N,CP_Drtn,TT_Task,DT_FixedDUR2,RV_OK,TK_Complete,4229EME40,Material selection Guide IFD,,,,0,0,0,0,40,0,0,0,2012-01-17 08:00,2012-01-17 08:00,2012-01-22 16:00,2013-09-26 16:00,2013-09-26 16:00,,2012-06-02 00:00,2012-06-02 00:00,,,2012-01-17 08:00,2012-01-23 16:00,,,,CS_MSO,PT_Normal,,,,,3NIly8JMuUiR3DL6PTwmgA,,,,N,0,0,,,2012-06-19 11:46,2012-06-20 10:09,admin,admin,,,
562,82820,773,10517,849,1,100,N,N,N,CP_Drtn,TT_Task,DT_FixedDUR2,RV_OK,TK_Complete,4229EME50,Material handling study IFA,,,,0,0,0,0,80,0,0,0,,2011-11-30 00:00,2012-01-08 00:00,2013-09-26 16:00,2013-09-26 16:00,,2012-06-02 00:00,2012-06-02 00:00,,,2011-12-04 08:00,2011-12-15 16:00,,,,,PT_Normal,,,,,a8hivxpjQESjNjcntbKSug,,,,N,0,0,,,2012-06-19 11:46,2012-06-20 10:09,admin,admin,,,
563,82821,773,10517,849,1,100,N,N,N,CP_Drtn,TT_Task,DT_FixedDUR2,RV_OK,TK_Complete,4229EME90,Final Material handling study,,,,0,0,0,0,48,0,0,0,,2012-01-29 08:00,2012-04-04 00:00,2013-09-26 16:00,2013-09-26 16:00,,2012-06-02 00:00,2012-06-02 00:00,,,2012-01-29 08:00,2012-02-05 16:00,,,,,PT_Normal,,,,,6ilL+/zgYEWqPj3I/3g52Q,,,,N,0,0,,,2012-06-19 11:46,2012-06-20 10:09,admin,admin,,,
564,82822,773,10517,849,1,100,N,N,N,CP_Drtn,TT_Task,DT_FixedDUR2,RV_OK,TK_Complete,4229EME80,Material Selection philosophy report-Approval,,,,0,0,0,0,80,0,0,0,,2011-11-30 00:00,2012-01-29 00:00,2013-09-26 16:00,2013-09-26 16:00,,2012-06-02 00:00,2012-06-02 00:00,,,2011-12-18 08:00,2011-12-29 16:00,,,,,PT_Normal,,,,,51YVB9xE3kODU1EDM5lmmQ,,,,N,0,0,,,2012-06-19 11:46,2012-06-20 10:09,admin,admin,,,
565,82823,773,10517,849,1,100,N,N,N,CP_Drtn,TT_Task,DT_FixedDUR2,RV_OK,TK_Complete,4229EME110,Material Selection philosophy report-Final,,,,0,0,0,0,80,0,0,0,,2012-03-04 08:00,2012-03-15 16:00,2013-09-26 16:00,2013-09-26 16:00,,2012-06-02 00:00,2012-06-02 00:00,,,2012-03-04 08:00,2012-03-15 16:00,,,,,PT_Normal,,,,,ITotHONpLUeXgnZ8njEX0w,,,,N,0,0,,,2012-06-19 11:46,2012-06-20 10:09,admin,admin,,,
566,82824,773,10499,849,1,100,N,N,N,CP_Drtn,TT_Task,DT_FixedDUR2,RV_OK,TK_Complete,4229EME170,MRQ for Progressive Cavity Pump,,,,0,0,0,0,40,0,0,0,,2012-03-07 00:00,2012-03-13 00:00,2013-01-23 08:00,2013-01-23 08:00,,2012-06-02 00:00,2012-06-02 00:00,,,2012-04-29 08:00,2012-05-03 16:00,,,,,PT_Normal,,,,,hCWQ9GrV4U+oSDPkn/iH+A,,,,N,0,0,,,2012-06-19 11:46,2012-06-20 10:09,admin,admin,,,
567,82825,773,10499,849,1,0,N,N,N,CP_Drtn,TT_Task,DT_FixedDUR2,RV_OK,TK_NotStart,4229EME190,V.P.R for Progressive Cavity pump,,1688,1688,800,0,0,0,800,0,0,0,,,,2013-05-12 08:00,2013-09-26 16:00,,2012-07-05 08:00,2012-12-05 16:00,2012-07-05 08:00,2012-12-05 16:00,2012-07-05 08:00,2012-12-05 16:00,,2013-05-12 08:00,2013-09-26 16:00,,PT_Normal,,,,,D39ZUU53Xka/iAAW6wbJdQ,,,,N,0,0,,,2012-06-19 11:46,2012-06-20 09:59,admin,admin,,,
568,82826,773,10499,849,1,0,N,N,N,CP_Drtn,TT_Task,DT_FixedDUR2,RV_OK,TK_NotStart,4229EME200,MRP for Progressive Cavity pump,,2368,0,40,0,0,0,40,0,0,0,,,,2013-09-08 08:00,2013-09-12 16:00,,2012-07-05 08:00,2012-07-11 16:00,2012-07-05 08:00,2012-07-11 16:00,2012-07-05 08:00,2012-07-11 16:00,,2013-09-08 08:00,2013-09-12 16:00,,PT_Normal,,,,,CmcCKrBDj0GfX10gglDYPQ,,,,N,0,0,,,2012-06-19 11:46,2012-06-20 09:59,admin,admin,,,
569,82827,773,10499,849,1,0,N,N,N,CP_Drtn,TT_Task,DT_FixedDUR2,RV_OK,TK_Active,4229EME180,T.E.R. for Progressive cavity pump,,1264,0,24,0,0,0,240,0,0,0,,2012-04-29 00:00,,2013-01-23 08:00,2013-01-27 16:00,2012-06-05 16:00,2012-06-03 08:00,2012-06-05 16:00,2012-06-03 08:00,2012-06-05 16:00,2012-05-02 08:00,2012-06-12 16:00,,2013-01-23 08:00,2013-01-27 16:00,,PT_Normal,,,,,0lOPQnz+eEiDoFTkXDWDjQ,,,,N,0,0,,,2012-06-19 11:46,2012-06-20 09:59,admin,admin,,,
570,82828,773,10499,849,1,100,N,N,N,CP_Drtn,TT_Task,DT_FixedDUR2,RV_OK,TK_Complete,4229EME120,V.P.R for cathodic protection,,,,0,0,0,0,360,0,0,0,,2012-03-27 00:00,2012-05-22 00:00,2013-09-15 08:00,2013-09-15 08:00,,2012-06-07 16:00,2012-06-07 16:00,,,2012-04-08 08:00,2012-06-07 16:00,,,,,PT_Normal,,,,,zxbNpTTuf0meaCudK/DCOA,,,,N,0,0,,,2012-06-19 11:46,2012-06-20 10:09,admin,admin,,,
571,82829,773,10499,849,1,100,N,N,N,CP_Drtn,TT_Task,DT_FixedDUR2,RV_OK,TK_Complete,4229EME130,Data sheets for corrosion inhibitor pump-Purchase,,,,0,0,0,0,24,0,0,0,,2012-03-25 00:00,2012-04-04 00:00,2013-09-26 16:00,2013-09-26 16:00,,2012-06-02 00:00,2012-06-02 00:00,,,2012-04-01 08:00,2012-04-03 16:00,,,,,PT_Normal,,,,,JjnnLSMivkekusR3V0NCMw,,,,N,0,0,,,2012-06-19 11:46,2012-06-20 10:09,admin,admin,,,
572,82830,773,10499,849,1,100,N,N,N,CP_Drtn,TT_Task,DT_FixedDUR2,RV_OK,TK_Complete,4229EME140,Data sheets for demulsifier injection pump-Purchase,,,,0,0,0,0,40,0,0,0,,2012-03-25 00:00,2012-03-27 00:00,2013-09-26 16:00,2013-09-26 16:00,,2012-06-02 00:00,2012-06-02 00:00,,,2012-04-05 08:00,2012-04-11 16:00,,,,,PT_Normal,,,,,27Vue0Lcx0KlA2Bih9tfHQ,,,,N,0,0,,,2012-06-19 11:46,2012-06-20 10:09,admin,admin,,,
573,82831,773,10499,849,1,100,N,N,N,CP_Drtn,TT_Task,DT_FixedDUR2,RV_OK,TK_Complete,4229EME150,Data sheets for scale inhibitor -Purchase,,,,0,0,0,0,40,0,0,0,,2012-03-25 00:00,2012-03-27 00:00,2013-09-26 16:00,2013-09-26 16:00,,2012-06-02 00:00,2012-06-02 00:00,,,2012-04-05 08:00,2012-04-11 16:00,,,,,PT_Normal,,,,,bXncsvpONUWJzrC4xcQBmw,,,,N,0,0,,,2012-06-19 11:46,2012-06-20 10:09,admin,admin,,,
574,82832,773,10499,849,1,100,N,N,N,CP_Drtn,TT_Task,DT_FixedDUR2,RV_OK,TK_Complete,4229EME160,Specifications for positive displacement pumps,,,,0,0,0,0,40,0,0,0,,2012-03-25 00:00,2012-03-27 00:00,2013-09-26 16:00,2013-09-26 16:00,,2012-06-02 00:00,2012-06-02 00:00,,,2012-04-05 08:00,2012-04-11 16:00,,,,,PT_Normal,,,,,GhO+CpAcC0qU5JkakXPy1g,,,,N,0,0,,,2012-06-19 11:46,2012-06-20 10:09,admin,admin,,,
575,82833,773,10499,849,1,100,N,N,N,CP_Drtn,TT_Task,DT_FixedDUR2,RV_OK,TK_Complete,4229EME10,MRQ for cathodic protection,,,,0,0,0,0,120,0,0,0,,2011-09-28 08:00,2011-10-20 00:00,2013-08-06 08:00,2013-08-06 08:00,,2012-06-02 00:00,2012-06-02 00:00,,,2011-09-28 08:00,2011-10-19 16:00,,,,,PT_Normal,,,,,MbppZc7QckalURPoKVI5+Q,,,,N,0,0,,,2012-06-19 11:46,2012-06-20 10:09,admin,admin,,,
576,82834,773,10499,849,1,100,N,N,N,CP_Drtn,TT_Task,DT_FixedDUR2,RV_OK,TK_Complete,4229EME60,T.E.R for cathodic protection,,,,0,0,0,0,120,0,0,0,,2011-11-24 00:00,2011-12-27 00:00,2013-08-06 08:00,2013-08-06 08:00,,2012-06-02 00:00,2012-06-02 00:00,,,2011-12-04 08:00,2011-12-22 16:00,,,,,PT_Normal,,,,,4RpcSYXZs0O8kZx9kC/mGg,,,,N,0,0,,,2012-06-19 11:46,2012-06-20 10:09,admin,admin,,,
577,82835,773,10499,849,1,100,N,N,N,CP_Drtn,TT_Task,DT_FixedDUR2,RV_OK,TK_Complete,4229EME100,MRP for cathodic protection,,,,0,0,0,0,40,0,0,0,,2012-02-26 00:00,2012-02-28 00:00,2013-08-06 08:00,2013-08-06 08:00,,2012-06-02 00:00,2012-06-02 00:00,,,2012-03-04 08:00,2012-03-08 16:00,,,,,PT_Normal,,,,,Kmi6ShZbHkyNqkjSSsr/mQ,,,,N,0,0,,,2012-06-19 11:46,2012-06-20 10:09,admin,admin,,,
578,82836,773,10521,849,1,0,N,N,N,CP_Drtn,TT_Task,DT_FixedDUR2,RV_OK,TK_NotStart,4229EOF590,Cable trays supports -Construction,,2160,864,80,0,0,0,80,0,0,0,,,,2013-09-15 08:00,2013-09-26 16:00,,2012-08-26 08:00,2012-09-06 16:00,2012-08-26 08:00,2012-09-06 16:00,2012-08-26 08:00,2012-09-06 16:00,,2013-09-15 08:00,2013-09-26 16:00,,PT_Normal,,,,,OU6IFqj4e0+P9XjHHHLIxw,,,,N,0,0,,,2012-06-19 11:46,2012-06-20 09:59,admin,admin,,,
579,82837,773,10521,849,1,100,N,N,N,CP_Drtn,TT_Task,DT_FixedDUR2,RV_OK,TK_Complete,4229EOF200,Jacket appartenues Drawings-Approval,,,,0,0,0,0,160,0,0,0,,2011-12-14 08:00,2011-12-25 00:00,2013-09-15 08:00,2013-09-15 08:00,,2012-06-02 00:00,2012-06-02 00:00,,,2011-12-14 08:00,2012-01-10 16:00,,,,,PT_Normal,,,,,MChlvXJxck+nrQyvG05sfw,,,,N,0,0,,,2012-06-19 11:46,2012-06-20 10:09,admin,admin,,,
580,82838,773,10521,849,1,0,N,N,N,CP_Drtn,TT_Task,DT_FixedDUR2,RV_OK,TK_NotStart,4229EOF520,Jacket Appurtenances Drawings-Construction,,2568,0,112,0,0,0,112,0,0,0,,,,2013-09-09 08:00,2013-09-26 16:00,2012-06-20 16:00,2012-06-03 08:00,2012-06-20 16:00,2012-06-03 08:00,2012-06-20 16:00,2012-06-03 08:00,2012-06-20 16:00,,2013-09-09 08:00,2013-09-26 16:00,,PT_Normal,,,,,SQuhMHvxvUSOTBS/mmqKaQ,,,,N,0,0,,,2012-06-19 11:46,2012-06-20 09:59,admin,admin,,,
581,82839,773,10521,849,1,100,N,N,N,CP_Drtn,TT_Task,DT_FixedDUR2,RV_OK,TK_Complete,4229EOF310,Grating & handrails drawings-Approval,,,,0,0,0,0,120,0,0,0,,2012-01-04 00:00,2012-01-08 00:00,2013-09-26 16:00,2013-09-26 16:00,,2012-06-02 00:00,2012-06-02 00:00,,,2012-01-30 08:00,2012-02-19 16:00,,,,,PT_Normal,,,,,+53Um0+ykUmTnjk90EiR5w,,,,N,0,0,,,2012-06-19 11:46,2012-06-20 10:09,admin,admin,,,
582,82840,773,10521,849,1,100,N,N,N,CP_Drtn,TT_Task,DT_FixedDUR2,RV_OK,TK_Complete,4229EOF410,Grating & handrails drawings-Construction,,,,0,0,0,0,120,0,0,0,,2012-01-10 00:00,2012-01-19 00:00,2013-09-26 16:00,2013-09-26 16:00,,2012-06-02 00:00,2012-06-02 00:00,,,2012-02-27 08:00,2012-03-18 16:00,,,,,PT_Normal,,,,,+//YxEsPTk+GXymQ55LwRw,,,,N,0,0,,,2012-06-19 11:46,2012-06-20 10:09,admin,admin,,,
583,82841,773,10521,849,1,0,N,N,N,CP_Drtn,TT_Task,DT_FixedDUR2,RV_OK,TK_NotStart,4229EOF580,Piping supports -Construction,,2232,936,40,0,0,0,40,0,0,0,,,,2013-09-22 08:00,2013-09-26 16:00,,2012-08-13 08:00,2012-08-26 16:00,2012-08-13 08:00,2012-08-26 16:00,2012-08-13 08:00,2012-08-26 16:00,,2013-09-22 08:00,2013-09-26 16:00,,PT_Normal,,,,,1wkg7KSpF0ultX7c/ZBz5Q,,,,N,0,0,,,2012-06-19 11:46,2012-06-20 09:59,admin,admin,,,
584,82842,773,10521,849,1,0,N,N,N,CP_Drtn,TT_Task,DT_FixedDUR2,RV_OK,TK_NotStart,4229EOF360,Piping supports -Approval,,2232,0,80,0,0,0,80,0,0,0,,,,2013-09-08 08:00,2013-09-19 16:00,,2012-07-30 08:00,2012-08-12 16:00,2012-07-30 08:00,2012-08-12 16:00,2012-07-30 08:00,2012-08-12 16:00,,2013-09-08 08:00,2013-09-19 16:00,,PT_Normal,,,,,Um76NMq8HUK61us1ByiW/w,,,,N,0,0,,,2012-06-19 11:46,2012-06-20 09:59,admin,admin,,,
585,82843,773,10521,849,1,100,N,N,N,CP_Drtn,TT_Task,DT_FixedDUR2,RV_OK,TK_Complete,4229EOF120,General drawings-Approval,,,,0,0,0,0,200,0,0,0,,2011-10-19 08:00,2011-11-22 00:00,2013-09-26 16:00,2013-09-26 16:00,,2012-06-02 00:00,2012-06-02 00:00,,,2011-10-19 08:00,2011-11-29 16:00,,,,,PT_Normal,,,,,hTPFUqmn2kyyCZhglS08YA,pHZmOGuMSlyGsG/c/oK2Fg,,,N,0,0,,,2012-06-19 11:46,2012-06-20 10:09,admin,admin,,,
586,82844,773,10521,849,1,100,N,N,N,CP_Drtn,TT_Task,DT_FixedDUR2,RV_OK,TK_Complete,4229EOF270,Genral Drawings- Construction,,,,0,0,0,0,160,0,0,0,,2011-12-07 00:00,2011-12-29 00:00,2013-09-26 16:00,2013-09-26 16:00,,2012-06-02 00:00,2012-06-02 00:00,,,2012-01-01 08:00,2012-01-29 16:00,,,,,PT_Normal,,,,,SQMGSD+soU6ReSRg5FsXnw,,,,N,0,0,,,2012-06-19 11:46,2012-06-20 10:09,admin,admin,,,
587,82845,773,10521,849,1,100,N,N,N,CP_Drtn,TT_Task,DT_FixedDUR2,RV_OK,TK_Complete,4229EOF130,Deck primary steel Drawings- Approval,,,,0,0,0,0,160,0,0,0,,2011-11-22 00:00,2011-12-29 00:00,2013-08-04 08:00,2013-08-04 08:00,,2012-06-02 00:00,2012-06-02 00:00,,,2011-12-04 08:00,2011-12-29 16:00,,,,,PT_Normal,,,,,YF1loQlFV0qKJGr1KlGkiQ,r1vh6DQ+T+Sw8D8Gqb1mPA,,,N,0,0,,,2012-06-19 11:46,2012-06-20 10:09,admin,admin,,,
588,82846,773,10521,849,1,100,N,N,N,CP_Drtn,TT_Task,DT_FixedDUR2,RV_OK,TK_Complete,4229EOF10,Jacket primary steel  Drawings-Approval,,,,0,0,0,0,200,0,0,0,,2011-10-19 08:00,2011-11-22 00:00,2013-08-04 08:00,2013-08-04 08:00,,2012-06-02 00:00,2012-06-02 00:00,,,2011-10-19 08:00,2011-11-29 16:00,,,,,PT_Normal,,,,,IcUKXe47dka01mmccH3NTQ,5t6WlUnKSuqJQ8zryJtE8g,,,N,0,0,,,2012-06-19 11:46,2012-06-20 10:09,admin,admin,,,
589,82847,773,10521,849,1,100,N,N,N,CP_Drtn,TT_Task,DT_FixedDUR2,RV_OK,TK_Complete,4229EOF260,Jacket primary steel  Drawings- Construction,,,,0,0,0,0,160,0,0,0,,2011-12-15 00:00,2011-12-29 00:00,2013-09-09 08:00,2013-09-09 08:00,,2012-06-02 00:00,2012-06-02 00:00,,,2012-01-01 08:00,2012-01-29 16:00,,,,,PT_Normal,,,,,tQSlAf9qf0uJ3hJID4ibeg,72Fq/cOZRx2mimvebPGxUw,,,N,0,0,,,2012-06-19 11:46,2012-06-20 10:09,admin,admin,,,
590,82848,773,10521,849,1,0,N,N,N,CP_Drtn,TT_Task,DT_FixedDUR2,RV_OK,TK_Active,4229EOF550,Deck primary steel Drawings- Construction,,2080,0,120,0,0,0,120,0,0,0,,2012-05-20 00:00,,2013-08-04 08:00,2013-08-22 16:00,,2012-07-22 08:00,2012-08-09 16:00,2012-07-22 08:00,2012-08-09 16:00,2012-06-18 08:00,2012-07-08 16:00,,2013-08-04 08:00,2013-08-22 16:00,,PT_Normal,,,,,yJ0tWPQ8NkCJY9rnjqGarw,cKAHJrH+Ry+KoWBkOlxCOw,,,N,0,0,,,2012-06-19 11:46,2012-06-20 09:59,admin,admin,,,
591,82849,773,10521,849,1,100,N,N,N,CP_Drtn,TT_Task,DT_FixedDUR2,RV_OK,TK_Complete,4229EOF290,Stairs drawings-Approval,,,,0,0,0,0,80,0,0,0,,2012-01-01 08:00,2012-02-20 00:00,2013-09-15 08:00,2013-09-15 08:00,,2012-06-02 00:00,2012-06-02 00:00,,,2012-01-01 08:00,2012-01-12 16:00,,,,,PT_Normal,,,,,+RVWMUANjUmwqlPYbxrMYw,,,,N,0,0,,,2012-06-19 11:46,2012-06-20 10:09,admin,admin,,,
592,82850,773,10521,849,1,0,N,N,N,CP_Drtn,TT_Task,DT_FixedDUR2,RV_OK,TK_NotStart,4229EOF390,Stairs drawings-Construction,,2320,1024,80,0,0,0,80,0,0,0,,,,2013-09-15 08:00,2013-09-26 16:00,,2012-07-22 08:00,2012-08-02 16:00,2012-07-22 08:00,2012-08-02 16:00,2012-07-22 08:00,2012-08-02 16:00,,2013-09-15 08:00,2013-09-26 16:00,,PT_Normal,,,,,st8veve5KE+jXwAFGoau4Q,,,,N,0,0,,,2012-06-19 11:46,2012-06-20 09:59,admin,admin,,,
593,82851,773,10521,849,1,0,N,N,N,CP_Drtn,TT_Task,DT_FixedDUR2,RV_OK,TK_NotStart,4229EOF600,Equipment fixation deatils-Construction,,2296,1000,80,0,0,0,80,0,0,0,,,,2013-09-15 08:00,2013-09-26 16:00,,2012-07-25 08:00,2012-08-07 16:00,2012-07-25 08:00,2012-08-07 16:00,2012-07-25 08:00,2012-08-07 16:00,,2013-09-15 08:00,2013-09-26 16:00,,PT_Normal,,,,,/H2vf21NUk6HF7u9hxxsMg,,,,N,0,0,,,2012-06-19 11:46,2012-06-20 09:59,admin,admin,,,
594,82852,773,10521,849,1,0,N,N,N,CP_Drtn,TT_Task,DT_FixedDUR2,RV_OK,TK_Active,4229EOF280,Cable trays supports -Approval,,2448,0,112,0,0,0,96,0,0,0,2012-05-15 08:00,2012-01-29 00:00,,2013-08-19 08:00,2013-09-05 16:00,2012-06-20 16:00,2012-06-03 08:00,2012-06-20 16:00,2012-06-03 08:00,2012-06-20 16:00,2012-05-15 08:00,2012-05-30 16:00,,2013-08-19 08:00,2013-09-05 16:00,CS_MSO,PT_Normal,,,,,COX00OMfKUq5d79LbY68fg,,,,N,0,0,,,2012-06-19 11:46,2012-06-20 09:59,admin,admin,,,
595,82853,773,10521,849,1,100,N,N,N,CP_Drtn,TT_Task,DT_FixedDUR2,RV_OK,TK_Complete,4229EOF170,Jacket secondary steel  & piles Drawings-Approval,,,,0,0,0,0,120,0,0,0,,2011-11-23 00:00,2011-12-15 00:00,2013-09-09 08:00,2013-09-09 08:00,,2012-06-02 00:00,2012-06-02 00:00,,,2011-12-04 08:00,2011-12-22 16:00,,,,,PT_Normal,,,,,aE8B87DlMkaLWOdGib+UFA,,,,N,0,0,,,2012-06-19 11:46,2012-06-20 10:09,admin,admin,,,
596,82854,773,10521,849,1,100,N,N,N,CP_Drtn,TT_Task,DT_FixedDUR2,RV_OK,TK_Complete,4229EOF230,Deck secondary steel Drawings- Approval,,,,0,0,0,0,160,0,0,0,,2011-12-14 08:00,2012-01-08 00:00,2013-09-26 16:00,2013-09-26 16:00,,2012-06-02 00:00,2012-06-02 00:00,,,2011-12-14 08:00,2012-01-10 16:00,,,,,PT_Normal,,,,,Z8WVhOzuB0CDajaI3+jX4g,,,,N,0,0,,,2012-06-19 11:46,2012-06-20 10:09,admin,admin,,,
597,82855,773,10521,849,1,100,N,N,N,CP_Drtn,TT_Task,DT_FixedDUR2,RV_OK,TK_Complete,4229EOF350,Jacket secondary steel  & piles Drawings- Construction,,,,0,0,0,0,120,0,0,0,,2012-01-15 00:00,2012-02-28 00:00,2013-09-09 08:00,2013-09-09 08:00,,2012-06-02 00:00,2012-06-02 00:00,,,2012-01-29 08:00,2012-02-16 16:00,,,,,PT_Normal,,,,,Z4uu/Al1Nkmt1h8Id75bvw,,,,N,0,0,,,2012-06-19 11:46,2012-06-20 10:09,admin,admin,,,
598,82856,773,10521,849,1,0,N,N,N,CP_Drtn,TT_Task,DT_FixedDUR2,RV_OK,TK_Active,4229EOF560,Deck secondary  steel Drawings- Construction,,2080,0,120,0,0,0,120,0,0,0,,2012-05-20 00:00,,2013-08-25 08:00,2013-09-12 16:00,,2012-08-12 08:00,2012-09-06 16:00,2012-08-12 08:00,2012-09-06 16:00,2012-07-09 08:00,2012-07-29 16:00,,2013-08-25 08:00,2013-09-12 16:00,,PT_Normal,,,,,B0D3lAnXpEuCwZQeY/ieOQ,,,,N,0,0,,,2012-06-19 11:46,2012-06-20 09:59,admin,admin,,,
599,82857,773,10503,849,1,0,N,N,N,CP_Drtn,TT_Task,DT_FixedDUR2,RV_OK,TK_NotStart,4229EOF610,Topside weight control report- Final,,2096,0.016667,64,0,0,0,64,0,0,0,,,,2013-09-17 08:00,2013-09-26 16:00,,2012-09-09 08:00,2012-09-18 16:00,2012-09-09 08:00,2012-09-18 16:00,2012-09-09 08:00,2012-09-18 16:00,,2013-09-17 08:00,2013-09-26 16:00,,PT_Normal,,,,,EhjwY1IklEiPhQjyrpVxYA,,,,N,0,0,,,2012-06-19 11:46,2012-06-20 10:08,admin,admin,,,
600,82858,773,10503,849,1,0,N,N,N,CP_Drtn,TT_Task,DT_FixedDUR2,RV_OK,TK_NotStart,4229EOF570,Constructability study report,,2175.983333,879.983333,80,0,0,0,80,0,0,0,,,,2013-09-15 08:00,2013-09-26 16:00,,2012-08-15 08:01,2012-09-05 08:01,2012-08-15 08:01,2012-09-05 08:01,2012-08-15 08:01,2012-09-05 08:01,,2013-09-15 08:00,2013-09-26 16:00,,PT_Normal,,,,,NQMg0KNzjU2cOQNYqGeiOw,,,,N,0,0,,,2012-06-19 11:46,2012-06-20 10:08,admin,admin,,,
601,82859,773,10503,849,1,100,N,N,N,CP_Drtn,TT_Task,DT_FixedDUR2,RV_OK,TK_Complete,4229EOF20,In-place analysis design report-Approval,,,,0,0,0,0,576,0,0,0,,2011-10-19 08:00,2012-02-16 00:00,2013-09-15 08:00,2013-09-15 08:00,,2012-06-02 00:00,2012-06-02 00:00,,,2011-10-19 08:00,2012-02-05 16:00,,,,,PT_Normal,,,,,UMNrMBtUE0+7UUpn0ahIag,,,,N,0,0,,,2012-06-19 11:46,2012-06-20 10:09,admin,admin,,,
602,82860,773,10503,849,1,0,N,N,N,CP_Drtn,TT_Task,DT_FixedDUR2,RV_OK,TK_NotStart,4229EOF420,In-place analysis design report-Final,,2240,0,80,0,0,0,80,0,0,0,,,,2013-09-15 08:00,2013-09-26 16:00,2012-03-21 16:00,2012-08-05 08:00,2012-08-16 16:00,2012-08-05 08:00,2012-08-16 16:00,2012-08-05 08:00,2012-08-16 16:00,,2013-09-15 08:00,2013-09-26 16:00,,PT_Normal,,,,,wbeXsFXav0OVbwHk7lvXfA,,,,N,0,0,,,2012-06-19 11:46,2012-06-20 09:59,admin,admin,,,
603,82861,773,10503,849,1,100,N,N,N,CP_Drtn,TT_Task,DT_FixedDUR2,RV_OK,TK_Complete,4229EOF30,Earthquake analysis design report-Approval,,,,0,0,0,0,576,0,0,0,,2011-10-19 08:00,2012-02-28 00:00,2013-09-26 16:00,2013-09-26 16:00,,2012-06-02 00:00,2012-06-02 00:00,,,2011-10-19 08:00,2012-02-05 16:00,,,,,PT_Normal,,,,,4nVHKCz7mEuIem5ln9eqqQ,,,,N,0,0,,,2012-06-19 11:46,2012-06-20 10:09,admin,admin,,,
604,82862,773,10503,849,1,0,N,N,N,CP_Drtn,TT_Task,DT_FixedDUR2,RV_OK,TK_NotStart,4229EOF440,Earthquake analysis design report-Final,,2200,0,80,0,0,0,80,0,0,0,,,,2013-09-15 08:00,2013-09-26 16:00,2012-03-21 16:00,2012-08-12 08:00,2012-08-30 16:00,2012-08-12 08:00,2012-08-30 16:00,2012-08-12 08:00,2012-08-30 16:00,,2013-09-15 08:00,2013-09-26 16:00,,PT_Normal,,,,,G49zQMhKJ0WuEVoW3Kh6ZQ,,,,N,0,0,,,2012-06-19 11:46,2012-06-20 09:59,admin,admin,,,
605,82863,773,10503,849,1,100,N,N,N,CP_Drtn,TT_Task,DT_FixedDUR2,RV_OK,TK_Complete,4229EOF140,Deck loadout analysis report-Approval,,,,0,0,0,0,560,0,0,0,,2012-02-26 00:00,2012-02-26 00:00,2013-09-15 08:00,2013-09-15 08:00,,2012-06-02 00:00,2012-06-02 00:00,,,2011-10-27 08:00,2012-02-09 16:00,,,,,PT_Normal,,,,,nUpBmYfzA0uP4sK54WgsNA,,,,N,0,0,,,2012-06-19 11:46,2012-06-20 10:09,admin,admin,,,
606,82864,773,10503,849,1,0,N,N,N,CP_Drtn,TT_Task,DT_FixedDUR2,RV_OK,TK_NotStart,4229EOF490,Deck loadout analysis report-Final,,2200,0,80,0,0,0,80,0,0,0,,,,2013-09-15 08:00,2013-09-26 16:00,2012-03-21 16:00,2012-08-12 08:00,2012-08-30 16:00,2012-08-12 08:00,2012-08-30 16:00,2012-08-12 08:00,2012-08-30 16:00,,2013-09-15 08:00,2013-09-26 16:00,,PT_Normal,,,,,s0+4sY2S4EywWpxizA4AIA,,,,N,0,0,,,2012-06-19 11:46,2012-06-20 09:59,admin,admin,,,
607,82865,773,10503,849,1,100,N,N,N,CP_Drtn,TT_Task,DT_FixedDUR2,RV_OK,TK_Complete,4229EOF150,Deck transportation analysis report-Approval,,,,0,0,0,0,560,0,0,0,,2011-10-27 08:00,2012-02-16 00:00,2013-09-15 08:00,2013-09-15 08:00,,2012-06-02 00:00,2012-06-02 00:00,,,2011-10-27 08:00,2012-02-09 16:00,,,,,PT_Normal,,,,,jMWaElOZRUiKfrv874avoA,,,,N,0,0,,,2012-06-19 11:46,2012-06-20 10:09,admin,admin,,,
608,82866,773,10503,849,1,0,N,N,N,CP_Drtn,TT_Task,DT_FixedDUR2,RV_OK,TK_NotStart,4229EOF500,Deck transportation analysis report-Final,,2240,0,80,0,0,0,80,0,0,0,,,,2013-09-15 08:00,2013-09-26 16:00,2012-03-21 16:00,2012-08-05 08:00,2012-08-16 16:00,2012-08-05 08:00,2012-08-16 16:00,2012-08-05 08:00,2012-08-16 16:00,,2013-09-15 08:00,2013-09-26 16:00,,PT_Normal,,,,,E0Q+rU+6F06Ta+nmy2Nwaw,,,,N,0,0,,,2012-06-19 11:46,2012-06-20 09:59,admin,admin,,,
609,82867,773,10503,849,1,100,N,N,N,CP_Drtn,TT_Task,DT_FixedDUR2,RV_OK,TK_Complete,4229EOF160,Deck lifting analysis design report-Approval,,,,0,0,0,0,560,0,0,0,,2011-10-27 08:00,2012-03-08 16:00,2013-09-26 16:00,2013-09-26 16:00,,2012-06-02 00:00,2012-06-02 00:00,,,2011-10-27 08:00,2012-02-09 16:00,,,,,PT_Normal,,,,,0E1Tt/EpOUCWebiI9vVKQg,,,,N,0,0,,,2012-06-19 11:46,2012-06-20 10:09,admin,admin,,,
610,82868,773,10503,849,1,0,N,N,N,CP_Drtn,TT_Task,DT_FixedDUR2,RV_OK,TK_NotStart,4229EOF510,Deck lifting analysis design report-Final,,2240,944,80,0,0,0,80,0,0,0,,,,2013-09-15 08:00,2013-09-26 16:00,,2012-08-05 08:00,2012-08-16 16:00,2012-08-05 08:00,2012-08-16 16:00,2012-08-05 08:00,2012-08-16 16:00,,2013-09-15 08:00,2013-09-26 16:00,,PT_Normal,,,,,MIKZUe5WtUKrEkeqq8lccQ,,,,N,0,0,,,2012-06-19 11:46,2012-06-20 09:59,admin,admin,,,
611,82869,773,10503,849,1,0,N,N,N,CP_Drtn,TT_Task,DT_FixedDUR2,RV_OK,TK_Active,4229EOF240,Deck miscellaneous design report-Approval,,2232,0,0,0,0,0,440,0,0,0,,2011-12-14 00:00,,2013-09-26 16:00,2013-09-26 16:00,2012-03-29 16:00,2012-08-27 08:00,2012-08-27 08:00,2012-08-27 08:00,2012-08-27 08:00,2012-01-01 08:00,2012-03-18 16:00,,2013-09-26 16:00,2013-09-26 16:00,,PT_Normal,,,,,EOMU3yHnHEKWS0Vg6+MhMw,,,,N,0,0,,,2012-06-19 11:46,2012-06-20 09:59,admin,admin,,,
612,82870,773,10503,849,1,0,N,N,N,CP_Drtn,TT_Task,DT_FixedDUR2,RV_OK,TK_NotStart,4229EOF530,Deck miscellaneous design report-Final,,2200,904,80,0,0,0,80,0,0,0,,,,2013-09-15 08:00,2013-09-26 16:00,,2012-08-12 08:00,2012-08-30 16:00,2012-08-12 08:00,2012-08-30 16:00,2012-08-12 08:00,2012-08-30 16:00,,2013-09-15 08:00,2013-09-26 16:00,,PT_Normal,,,,,1ZFFC83B7k2ja7O24oT9sg,,,,N,0,0,,,2012-06-19 11:46,2012-06-20 09:59,admin,admin,,,
613,82871,773,10503,849,1,100,N,N,N,CP_Drtn,TT_Task,DT_FixedDUR2,RV_OK,TK_Complete,4229EOF40,Fatigue analysis design report-Approval,,,,0,0,0,0,616,0,0,0,,2011-10-19 08:00,2012-02-09 00:00,2013-09-15 08:00,2013-09-15 08:00,,2012-06-02 00:00,2012-06-02 00:00,,,2011-10-19 08:00,2012-02-12 16:00,,,,,PT_Normal,,,,,YKttPC6RPEeQ8jexdCme2w,,,,N,0,0,,,2012-06-19 11:46,2012-06-20 10:09,admin,admin,,,
614,82872,773,10503,849,1,100,N,N,N,CP_Drtn,TT_Task,DT_FixedDUR2,RV_OK,TK_Complete,4229EOF450,Fatigue analysis design report-Final,,,,0,0,0,0,80,0,0,0,,2012-02-21 00:00,2012-03-08 16:00,2013-09-26 16:00,2013-09-26 16:00,,2012-06-02 00:00,2012-06-02 00:00,,,2012-04-02 08:00,2012-04-15 16:00,,,,,PT_Normal,,,,,7ZuUMrNxTUmQ/5JUPsmG2w,,,,N,0,0,,,2012-06-19 11:46,2012-06-20 10:09,admin,admin,,,
615,82873,773,10503,849,1,100,N,N,N,CP_Drtn,TT_Task,DT_FixedDUR2,RV_OK,TK_Complete,4229EOF50,Boat impact design analysis report-Approval,,,,0,0,0,0,616,0,0,0,,2011-10-19 08:00,2012-02-26 00:00,2013-09-26 16:00,2013-09-26 16:00,,2012-06-02 00:00,2012-06-02 00:00,,,2011-10-19 08:00,2012-02-12 16:00,,,,,PT_Normal,,,,,myUu/6/eeUW8DqqMugQqnQ,,,,N,0,0,,,2012-06-19 11:46,2012-06-20 10:09,admin,admin,,,
616,82874,773,10503,849,1,100,N,N,N,CP_Drtn,TT_Task,DT_FixedDUR2,RV_OK,TK_Complete,4229EOF460,Boat impact design analysis report-Final,,,,0,0,0,0,80,0,0,0,,2012-03-11 08:00,2012-03-26 00:00,2013-09-26 16:00,2013-09-26 16:00,,2012-06-02 00:00,2012-06-02 00:00,,,2012-03-11 08:00,2012-03-22 16:00,,,,,PT_Normal,,,,,0wW/86Kbeky3sd/IakjKJg,,,,N,0,0,,,2012-06-19 11:46,2012-06-20 10:09,admin,admin,,,
617,82875,773,10503,849,1,100,N,N,N,CP_Drtn,TT_Task,DT_FixedDUR2,RV_OK,TK_Complete,4229EOF60,Jacket loadout analysis design report-Approval,,,,0,0,0,0,416,0,0,0,,2011-10-19 08:00,2012-01-22 00:00,2013-09-26 16:00,2013-09-26 16:00,,2012-06-02 00:00,2012-06-02 00:00,,,2011-10-19 08:00,2012-01-05 16:00,,,,,PT_Normal,,,,,lV9NwnVOz0SRfU1QK8bXjw,,,,N,0,0,,,2012-06-19 11:46,2012-06-20 10:09,admin,admin,,,
618,82876,773,10503,849,1,100,N,N,N,CP_Drtn,TT_Task,DT_FixedDUR2,RV_OK,TK_Complete,4229EOF320,Jacket loadout analysis design report-Final,,,,0,0,0,0,80,0,0,0,2012-01-30 00:00,2012-02-07 00:00,2012-02-09 00:00,2013-09-26 16:00,2013-09-26 16:00,,2012-06-02 00:00,2012-06-02 00:00,,,2012-03-04 08:00,2012-03-15 16:00,,,,CS_MSOA,PT_Normal,,,,,iq+agyzicEOdaakgKTgaaA,,,,N,0,0,,,2012-06-19 11:46,2012-06-20 10:09,admin,admin,,,
619,82877,773,10503,849,1,100,N,N,N,CP_Drtn,TT_Task,DT_FixedDUR2,RV_OK,TK_Complete,4229EOF70,Jacket transportation analysis design report-Approval,,,,0,0,0,0,416,0,0,0,,2011-10-19 08:00,2012-01-22 00:00,2013-09-26 16:00,2013-09-26 16:00,,2012-06-02 00:00,2012-06-02 00:00,,,2011-10-19 08:00,2012-01-05 16:00,,,,,PT_Normal,,,,,lp6Y06ipuUGIZVvRzbVQ5g,,,,N,0,0,,,2012-06-19 11:46,2012-06-20 10:09,admin,admin,,,
620,82878,773,10503,849,1,100,N,N,N,CP_Drtn,TT_Task,DT_FixedDUR2,RV_OK,TK_Complete,4229EOF330,Jacket transportation analysis design report- Final,,,,0,0,0,0,80,0,0,0,,2012-02-07 00:00,2012-02-09 00:00,2013-09-26 16:00,2013-09-26 16:00,,2012-06-02 00:00,2012-06-02 00:00,,,2012-03-04 08:00,2012-03-15 16:00,,,,,PT_Normal,,,,,+LRs1dmWHEGjBKtTYtOKCw,,,,N,0,0,,,2012-06-19 11:46,2012-06-20 10:09,admin,admin,,,
621,82879,773,10503,849,1,100,N,N,N,CP_Drtn,TT_Task,DT_FixedDUR2,RV_OK,TK_Complete,4229EOF80,Jacket lifting analysis design report-Approval,,,,0,0,0,0,416,0,0,0,,2011-10-19 08:00,2012-01-05 00:00,2013-09-26 16:00,2013-09-26 16:00,,2012-06-02 00:00,2012-06-02 00:00,,,2011-10-19 08:00,2012-01-05 16:00,,,,,PT_Normal,,,,,ir2IymkbikSSbs2feuIRVw,,,,N,0,0,,,2012-06-19 11:46,2012-06-20 10:09,admin,admin,,,
622,82880,773,10503,849,1,100,N,N,N,CP_Drtn,TT_Task,DT_FixedDUR2,RV_OK,TK_Complete,4229EOF340,Jacket lifting analysis design report-Final,,,,0,0,0,0,80,0,0,0,,2012-01-29 08:00,2012-02-09 00:00,2013-09-26 16:00,2013-09-26 16:00,,2012-06-02 00:00,2012-06-02 00:00,,,2012-01-29 08:00,2012-02-09 16:00,,,,,PT_Normal,,,,,wjqMhKhdI02x6E8GIqsZ5w,,,,N,0,0,,,2012-06-19 11:46,2012-06-20 10:09,admin,admin,,,
623,82881,773,10503,849,1,100,N,N,N,CP_Drtn,TT_Task,DT_FixedDUR2,RV_OK,TK_Complete,4229EOF90,Jacket floatation & upending analysis report-Approval,,,,0,0,0,0,496,0,0,0,,2011-10-19 08:00,2012-01-31 00:00,2013-09-26 16:00,2013-09-26 16:00,,2012-06-02 00:00,2012-06-02 00:00,,,2011-10-19 08:00,2012-01-19 16:00,,,,,PT_Normal,,,,,76MpCzxCBkqBCVTq/r7MlQ,,,,N,0,0,,,2012-06-19 11:46,2012-06-20 10:09,admin,admin,,,
624,82882,773,10503,849,1,100,N,N,N,CP_Drtn,TT_Task,DT_FixedDUR2,RV_OK,TK_Complete,4229EOF370,Jacket floatation & upending analysis report-Final,,,,0,0,0,0,80,0,0,0,,2012-02-13 00:00,2012-03-07 00:00,2013-09-26 16:00,2013-09-26 16:00,,2012-06-02 00:00,2012-06-02 00:00,,,2012-03-27 08:00,2012-04-09 16:00,,,,,PT_Normal,,,,,tvQO0yxYqkmk1YkFgK4Jfw,,,,N,0,0,,,2012-06-19 11:46,2012-06-20 10:09,admin,admin,,,
625,82883,773,10503,849,1,100,N,N,N,CP_Drtn,TT_Task,DT_FixedDUR2,RV_OK,TK_Complete,4229EOF100,Jacket on-bottom stability report-Approval,,,,0,0,0,0,496,0,0,0,,2011-10-19 08:00,2012-01-31 00:00,2013-09-26 16:00,2013-09-26 16:00,,2012-06-02 00:00,2012-06-02 00:00,,,2011-10-19 08:00,2012-01-19 16:00,,,,,PT_Normal,,,,,xL7Oo7bJT0unmhh5M3WdFw,,,,N,0,0,,,2012-06-19 11:46,2012-06-20 10:09,admin,admin,,,
626,82884,773,10503,849,1,100,N,N,N,CP_Drtn,TT_Task,DT_FixedDUR2,RV_OK,TK_Complete,4229EOF380,Jacket on-bottom stability report-Final,,,,0,0,0,0,80,0,0,0,,2012-02-13 00:00,2012-02-26 00:00,2013-09-26 16:00,2013-09-26 16:00,,2012-06-02 00:00,2012-06-02 00:00,,,2012-03-29 08:00,2012-04-11 16:00,,,,,PT_Normal,,,,,KFx0n1lId0q8dn5YZZDVmg,,,,N,0,0,,,2012-06-19 11:46,2012-06-20 10:09,admin,admin,,,
627,82885,773,10503,849,1,100,N,N,N,CP_Drtn,TT_Task,DT_FixedDUR2,RV_OK,TK_Complete,4229EOF110,Pile foundation design report-Approval,,,,0,0,0,0,648,0,0,0,,2011-10-19 08:00,2012-03-14 00:00,2013-09-26 16:00,2013-09-26 16:00,,2012-06-02 00:00,2012-06-02 00:00,,,2011-10-19 08:00,2012-02-16 16:00,,,,,PT_Normal,,,,,mckH851hZUGpE4TwKXloAQ,,,,N,0,0,,,2012-06-19 11:46,2012-06-20 10:09,admin,admin,,,
628,82886,773,10503,849,1,100,N,N,N,CP_Drtn,TT_Task,DT_FixedDUR2,RV_OK,TK_Complete,4229EOF250,Pushover analysis design SOW,,,,0,0,0,0,144,0,0,0,2012-03-01 08:00,2011-12-15 00:00,2011-12-29 00:00,2013-09-26 16:00,2013-09-26 16:00,,2012-06-02 00:00,2012-06-02 00:00,,,2012-03-04 08:00,2012-03-27 16:00,,,,CS_MSO,PT_Normal,,,,,JjVcoZxDHk2FsYHzIxnj2A,,,,N,0,0,,,2012-06-19 11:46,2012-06-20 10:09,admin,admin,,,
629,82887,773,10503,849,1,0,N,N,N,CP_Drtn,TT_Task,DT_FixedDUR2,RV_OK,TK_NotStart,4229EOF470,Pile foundation design report-Final,,2200,904,80,0,0,0,80,0,0,0,,,,2013-09-15 08:00,2013-09-26 16:00,,2012-08-12 08:00,2012-08-30 16:00,2012-08-12 08:00,2012-08-30 16:00,2012-08-12 08:00,2012-08-30 16:00,,2013-09-15 08:00,2013-09-26 16:00,,PT_Normal,,,,,tGDqlPTvKkOhXDW3E+shTQ,,,,N,0,0,,,2012-06-19 11:46,2012-06-20 09:59,admin,admin,,,
630,82888,773,10503,849,1,100,N,N,N,CP_Drtn,TT_Task,DT_FixedDUR2,RV_OK,TK_Complete,4229EOF480,Pushover analysis design T.E.R,,,,0,0,0,0,80,0,0,0,,2012-02-01 00:00,2012-03-04 16:00,2013-09-26 16:00,2013-09-26 16:00,,2012-06-02 00:00,2012-06-02 00:00,,,2012-05-03 08:00,2012-05-16 16:00,,,,,PT_Normal,,,,,jiPJ0cvCyU20wbNaXZ5Hpg,,,,N,0,0,,,2012-06-19 11:46,2012-06-20 10:09,admin,admin,,,
631,82889,773,10503,849,1,100,N,N,N,CP_Drtn,TT_Task,DT_FixedDUR2,RV_OK,TK_Complete,4229EOF180,Jacket miscellaneous design report-Approval,,,,0,0,0,0,392,0,0,0,,2011-11-23 00:00,2012-02-09 00:00,2013-09-26 16:00,2013-09-26 16:00,,2012-06-02 00:00,2012-06-02 00:00,,,2011-12-04 08:00,2012-02-09 16:00,,,,,PT_Normal,,,,,dZkQ05qT9EiCeD0Y1w+TMA,,,,N,0,0,,,2012-06-19 11:46,2012-06-20 10:09,admin,admin,,,
632,82890,773,10503,849,1,0,N,N,N,CP_Drtn,TT_Task,DT_FixedDUR2,RV_OK,TK_NotStart,4229EOF630,Jacket miscellaneous design report-Final,,2080,784,80,0,0,0,80,0,0,0,,,,2013-09-15 08:00,2013-09-26 16:00,,2012-09-09 08:00,2012-09-20 16:00,2012-09-09 08:00,2012-09-20 16:00,2012-09-09 08:00,2012-09-20 16:00,,2013-09-15 08:00,2013-09-26 16:00,,PT_Normal,,,,,TkXuZhQXR0+7Ryzn8RLpSQ,,,,N,0,0,,,2012-06-19 11:46,2012-06-20 09:59,admin,admin,,,
633,82891,773,10503,849,1,100,N,N,N,CP_Drtn,TT_Task,DT_FixedDUR2,RV_OK,TK_Complete,4229EOF190,Jacket weight control report -Approval,,,,0,0,0,0,64,0,0,0,,2011-12-14 00:00,2012-01-26 00:00,2013-09-26 16:00,2013-09-26 16:00,,2012-06-02 00:00,2012-06-02 00:00,,,2012-01-01 08:00,2012-01-10 16:00,,,,,PT_Normal,,,,,bzS27FjFRkWAo1TEh1rP7Q,,,,N,0,0,,,2012-06-19 11:46,2012-06-20 10:09,admin,admin,,,
634,82892,773,10503,849,1,100,N,N,N,CP_Drtn,TT_Task,DT_FixedDUR2,RV_OK,TK_Complete,4229EOF300,Topside weight control report- Approval,,,,0,0,0,0,64,0,0,0,,2011-11-22 00:00,2012-01-31 00:00,2013-09-26 16:00,2013-09-26 16:00,,2012-06-02 00:00,2012-06-02 00:00,,,2012-01-18 08:00,2012-01-30 16:00,,,,,PT_Normal,,,,,Bwdh8Rv7pEiP9g/hII7awA,,,,N,0,0,,,2012-06-19 11:46,2012-06-20 10:09,admin,admin,,,
635,82893,773,10503,849,1,100,N,N,N,CP_Drtn,TT_Task,DT_FixedDUR2,RV_OK,TK_Complete,4229EOF430,Jacket weight control report -Final,,,,0,0,0,0,64,0,0,0,,2012-01-11 00:00,2012-02-09 00:00,2013-09-26 16:00,2013-09-26 16:00,,2012-06-02 00:00,2012-06-02 00:00,,,2012-03-25 08:00,2012-04-03 16:00,,,,,PT_Normal,,,,,eVdK5ytNYkaGPTP5P78RNA,,,,N,0,0,,,2012-06-19 11:46,2012-06-20 10:09,admin,admin,,,
636,82894,773,10504,847,1,100,N,N,N,CP_Drtn,TT_Task,DT_FixedDUR2,RV_OK,TK_Complete,4229EOF210,Steel structure specification,,,,0,0,0,0,48,0,0,0,,2011-12-13 00:00,2011-12-20 16:00,2013-09-26 16:00,2013-09-26 16:00,,2012-06-02 00:00,2012-06-02 00:00,,,2011-12-14 16:00,2011-12-20 16:00,,,,,PT_Normal,,,,,4yptu216T0aFPVDrgpAcpA,nh2OsvLATSC5rtxCW++dPA,,,N,0,0,,,2012-06-19 11:46,2012-06-20 10:09,admin,admin,,,
637,82895,773,10504,847,1,100,N,N,N,CP_Drtn,TT_Task,DT_FixedDUR2,RV_OK,TK_Complete,4229EOF220,Weight control procedures,,,,0,0,0,0,48,0,0,0,,2011-12-13 00:00,2011-12-20 16:00,2013-09-26 16:00,2013-09-26 16:00,,2012-06-02 00:00,2012-06-02 00:00,,,2011-12-14 16:00,2011-12-20 16:00,,,,,PT_Normal,,,,,pstVxQp/WUa52n4A2GxwpQ,P/q4bOA8Q5mdAZKi/N3pnw,,,N,0,0,,,2012-06-19 11:46,2012-06-20 10:09,admin,admin,,,
638,82896,773,10504,847,1,100,N,N,N,CP_Drtn,TT_Task,DT_FixedDUR2,RV_OK,TK_Complete,4229EOF620,Deck Secondary  Steel structure MTO,,,,0,0,0,0,40,0,0,0,,2011-12-18 00:00,2011-12-28 00:00,2013-09-26 16:00,2013-09-26 16:00,,2012-09-06 16:00,2012-09-06 16:00,,,2012-08-30 16:00,2012-09-04 16:00,,,,,PT_Normal,,,,,jWJnupzM0UWWK4vwJ7kEEQ,sANoBJq9SXeJwue+C5ok0Q,,,N,0,0,,,2012-06-19 11:46,2012-06-20 10:09,admin,admin,,,
639,82897,773,10504,847,1,100,N,N,N,CP_Drtn,TT_Task,DT_FixedDUR2,RV_OK,TK_Complete,4229EOF540,Jacket secondary steel & Piles  MTO,,,,0,0,0,0,40,0,0,0,,2011-12-18 08:00,2011-12-28 00:00,2013-09-26 16:00,2013-09-26 16:00,,2012-06-02 00:00,2012-06-02 00:00,,,2011-12-18 08:00,2011-12-22 17:00,,,,,PT_Normal,,,,,wouZuI/Jg0WwaTM9MB/4VQ,f8msic+ESYmMQVyjAZKluA,,,N,0,0,,,2012-06-19 11:46,2012-06-20 10:09,admin,admin,,,
640,82898,773,10504,847,1,100,N,N,N,CP_Drtn,TT_Task,DT_FixedDUR2,RV_OK,TK_Complete,4229EOF640,Jacket  Primary  Steel structure MTO,,,,0,0,0,0,40,0,0,0,,2011-12-18 08:00,2011-12-25 00:00,2013-09-26 16:00,2013-09-26 16:00,,2012-06-02 00:00,2012-06-02 00:00,,,2011-12-18 08:00,2011-12-22 17:00,,,,,PT_Normal,,,,,4fEedpXaL0i50bkoOC2Gag,WfW5Cj3gRpKnkh5ags/fyQ,,,N,0,0,,,2012-06-19 11:46,2012-06-20 10:09,admin,admin,,,
641,82899,773,10504,847,1,100,N,N,N,CP_Drtn,TT_Task,DT_FixedDUR2,RV_OK,TK_Complete,4229EOF650,Deck Primary Steel structure MTO,,,,0,0,0,0,40,0,0,0,,2011-12-18 08:00,2011-12-28 00:00,2013-09-26 16:00,2013-09-26 16:00,,2012-06-02 00:00,2012-06-02 00:00,,,2011-12-18 08:00,2011-12-22 17:00,,,,,PT_Normal,,,,,tM1+gxcEbUiOiMQadz+fCA,BbgcnaE3QVSI7hB6gcXwgQ,,,N,0,0,,,2012-06-19 11:46,2012-06-20 10:09,admin,admin,,,
642,82900,773,10504,847,1,100,N,N,N,CP_Drtn,TT_Task,DT_FixedDUR2,RV_OK,TK_Complete,4229EOF660,Jacket app. MTO,,,,0,0,0,0,40,0,0,0,,2011-12-18 00:00,2011-12-28 00:00,2013-09-26 16:00,2013-09-26 16:00,,2012-06-20 16:00,2012-06-20 16:00,,,2012-05-21 16:00,2012-05-26 16:00,,,,,PT_Normal,,,,,mKAYczUMoEKHpFS1dcHqzg,RtOWAB3Bl0iNbQrSBz3AiA,,,N,0,0,,,2012-06-19 11:46,2012-06-20 10:09,admin,admin,,,
643,82901,773,10506,849,1,100,N,N,N,CP_Drtn,TT_Task,DT_FixedDUR2,RV_OK,TK_Complete,4229EEL90,Cable schedule IFA,,,,0,0,0,0,40,0,0,0,,2011-12-04 00:00,2011-12-06 00:00,2013-03-31 08:00,2013-03-31 08:00,,2012-06-02 00:00,2012-06-02 00:00,,,2011-12-11 08:00,2011-12-15 16:00,,,,,PT_Normal,,,,,VlGfgRaqKEeyQwLKmQDt9A,,,,N,0,0,,,2012-06-19 11:46,2012-06-20 10:09,admin,admin,,,
644,82902,773,10506,849,1,100,N,N,N,CP_Drtn,TT_Task,DT_FixedDUR2,RV_OK,TK_Complete,4229EEL180,Cable schedule IFD,,,,0,0,0,0,40,0,0,0,,2012-01-19 00:00,2012-02-01 00:00,2013-09-08 08:00,2013-09-08 08:00,,2012-06-02 00:00,2012-06-02 00:00,,,2012-03-25 08:00,2012-03-29 16:00,,,,,PT_Normal,,,,,CXdxzeDzPkqxcK+hQzhbRg,g6eh+Mkywk6aOzOj8iXrVw,,,N,0,0,,,2012-06-19 11:46,2012-06-20 10:09,admin,admin,,,
645,82903,773,10506,849,1,0,N,N,N,CP_Drtn,TT_Task,DT_FixedDUR2,RV_OK,TK_NotStart,4229EEL250,Cable schedule IFC,,2160,0,40,0,0,0,40,0,0,0,,,,2013-09-08 08:00,2013-09-12 16:00,,2012-08-12 08:00,2012-08-16 16:00,2012-08-12 08:00,2012-08-16 16:00,2012-08-12 08:00,2012-08-16 16:00,,2013-09-08 08:00,2013-09-12 16:00,,PT_Normal,,,,,U05UwANkWEuLEk+qO21ypQ,,,,N,0,0,,,2012-06-19 11:46,2012-06-20 09:59,admin,admin,,,
646,82904,773,10506,849,1,100,N,N,N,CP_Drtn,TT_Task,DT_FixedDUR2,RV_OK,TK_Complete,4229EEL100,Electrical cable routing layouts -Approval,,,,0,0,0,0,80,0,0,0,2012-01-11 08:00,2011-11-30 00:00,2011-12-20 00:00,2013-03-31 08:00,2013-03-31 08:00,,2012-06-02 00:00,2012-06-02 00:00,,,2012-01-11 08:00,2012-01-24 16:00,,,,CS_MSO,PT_Normal,,,,,CehclYAOUUG8Bdr32ISIyg,,,,N,0,0,,,2012-06-19 11:46,2012-06-20 10:09,admin,admin,,,
647,82905,773,10506,849,1,100,N,N,N,CP_Drtn,TT_Task,DT_FixedDUR2,RV_OK,TK_Complete,4229EEL190,Electrical cable routing layouts -Design,,,,0,0,0,0,80,0,0,0,,2012-01-01 00:00,2012-01-30 00:00,2013-08-19 08:00,2013-08-19 08:00,,2012-06-02 00:00,2012-06-02 00:00,,,2012-03-18 08:00,2012-03-29 16:00,,,,,PT_Normal,,,,,4qNJqT6M2kaomJDZQnYB1w,,,,N,0,0,,,2012-06-19 11:46,2012-06-20 10:09,admin,admin,,,
648,82906,773,10506,849,1,0,N,N,N,CP_Drtn,TT_Task,DT_FixedDUR2,RV_OK,TK_NotStart,4229EEL260,Electrical cable routing layouts -Construction,,2160,0,80,0,0,0,80,0,0,0,,,,2013-09-01 08:00,2013-09-12 16:00,,2012-08-05 08:00,2012-08-16 16:00,2012-08-05 08:00,2012-08-16 16:00,2012-08-05 08:00,2012-08-16 16:00,,2013-09-01 08:00,2013-09-12 16:00,,PT_Normal,,,,,/lROMVlCA0ydsuu2vSl1Eg,,,,N,0,0,,,2012-06-19 11:46,2012-06-20 09:59,admin,admin,,,
649,82907,773,10506,849,1,0,N,N,N,CP_Drtn,TT_Task,DT_FixedDUR2,RV_OK,TK_NotStart,4229EEL220,Interconnection & wiring diagram- Construction,,2248,88,120,0,0,0,120,0,0,0,,,,2013-08-25 08:00,2013-09-12 16:00,,2012-07-12 08:00,2012-08-01 16:00,2012-07-12 08:00,2012-08-01 16:00,2012-07-12 08:00,2012-08-01 16:00,,2013-08-25 08:00,2013-09-12 16:00,,PT_Normal,,,,,B0sutr1alUi6FwlqOebMPg,,,,N,0,0,,,2012-06-19 11:46,2012-06-20 09:59,admin,admin,,,
650,82908,773,10506,849,1,0,N,N,N,CP_Drtn,TT_Task,DT_FixedDUR2,RV_OK,TK_NotStart,4229EEL270,Electrical installation details -Construction,,2160,864,80,0,0,0,80,0,0,0,,,,2013-09-15 08:00,2013-09-26 16:00,,2012-08-26 08:00,2012-09-06 16:00,2012-08-26 08:00,2012-09-06 16:00,2012-08-26 08:00,2012-09-06 16:00,,2013-09-15 08:00,2013-09-26 16:00,,PT_Normal,,,,,Ip+jYSMKrUKyPEkJaaZEWw,,,,N,0,0,,,2012-06-19 11:46,2012-06-20 09:59,admin,admin,,,
651,82909,773,10506,849,1,0,N,N,N,CP_Drtn,TT_Task,DT_FixedDUR2,RV_OK,TK_NotStart,4229EEL290,Single line diagram -Construction,,2328,1032,80,0,0,0,80,0,0,0,,,,2013-09-15 08:00,2013-09-26 16:00,,2012-07-19 08:00,2012-08-01 16:00,2012-07-19 08:00,2012-08-01 16:00,2012-07-19 08:00,2012-08-01 16:00,,2013-09-15 08:00,2013-09-26 16:00,,PT_Normal,,,,,dQs+8xdRpEKNN/XSejxLYg,Qx0q73DiTyaQe37JuO5tMQ,,,N,0,0,,,2012-06-19 11:46,2012-06-20 09:59,admin,admin,,,
652,82910,773,10506,849,1,100,N,N,N,CP_Drtn,TT_Task,DT_FixedDUR2,RV_OK,TK_Complete,4229EEL50,Electrical Load analysis -Design,,,,0,0,0,0,40,0,0,0,,2011-11-02 00:00,2011-12-15 00:00,2013-09-15 08:00,2013-09-15 08:00,,2012-06-02 00:00,2012-06-02 00:00,,,2011-12-07 08:00,2011-12-13 16:00,,,,,PT_Normal,,,,,swVSfnV6ekC8VYt4eoyFIw,MiQZLA+kQ+6Rx/LgkcR9vw,,,N,0,0,,,2012-06-19 11:46,2012-06-20 10:09,admin,admin,,,
653,82911,773,10506,849,1,0,N,N,N,CP_Drtn,TT_Task,DT_FixedDUR2,RV_OK,TK_NotStart,4229EEL110,Electrical Load analysis -Final,,2360,0,40,0,0,0,40,0,0,0,,,,2013-09-08 08:00,2013-09-12 16:00,,2012-07-08 08:00,2012-07-12 16:00,2012-07-08 08:00,2012-07-12 16:00,2012-07-08 08:00,2012-07-12 16:00,,2013-09-08 08:00,2013-09-12 16:00,,PT_Normal,,,,,lG2ND4VA8Emu7QXQPspY/w,P+VGqfXaRf+wtG1WDLthHA,,,N,0,0,,,2012-06-19 11:46,2012-06-20 09:59,admin,admin,,,
654,82912,773,10506,849,1,100,N,N,N,CP_Drtn,TT_Task,DT_FixedDUR2,RV_OK,TK_Complete,4229EEL120,Single line diagram -Design,,,,0,0,0,0,64,0,0,0,,2011-11-20 00:00,2011-11-27 00:00,2013-09-15 08:00,2013-09-15 08:00,,2012-07-12 16:00,2012-07-12 16:00,,,2011-12-27 08:00,2012-01-05 16:00,,,,,PT_Normal,,,,,JmM51Qgn7k2/jfmXr0GlQw,1bglG1aCRFG8YhRS8hMk7Q,,,N,0,0,,,2012-06-19 11:46,2012-06-20 10:09,admin,admin,,,
655,82913,773,10506,849,1,100,N,N,N,CP_Drtn,TT_Task,DT_FixedDUR2,RV_OK,TK_Complete,4229EEL70,Hazardous area classification layout -IFA,,,,0,0,0,0,80,0,0,0,,2011-11-21 00:00,2011-11-29 00:00,2013-09-15 08:00,2013-09-15 08:00,,2012-06-02 00:00,2012-06-02 00:00,,,2011-12-04 08:00,2011-12-15 16:00,,,,,PT_Normal,,,,,CFkssqYoJE+AJbEcXdW7ug,,,,N,0,0,,,2012-06-19 11:46,2012-06-20 10:09,admin,admin,,,
656,82914,773,10506,849,1,100,N,N,N,CP_Drtn,TT_Task,DT_FixedDUR2,RV_OK,TK_Complete,4229EEL160,Hazardous area classification layout -IFD,,,,0,0,0,0,80,0,0,0,,2011-11-27 00:00,2012-01-24 16:00,2013-09-15 08:00,2013-09-15 08:00,,2012-06-02 00:00,2012-06-02 00:00,,,2012-01-12 08:00,2012-01-26 16:00,,,,,PT_Normal,,,,,WPg52PKr2EWTmYUCu4Wtug,,,,N,0,0,,,2012-06-19 11:46,2012-06-20 10:09,admin,admin,,,
657,82915,773,10506,849,1,0,N,N,N,CP_Drtn,TT_Task,DT_FixedDUR2,RV_OK,TK_NotStart,4229EEL240,Hazardous area classification layout -IFC,,2216,56,80,0,0,0,80,0,0,0,,,,2013-09-01 08:00,2013-09-12 16:00,,2012-07-25 08:00,2012-08-07 16:00,2012-07-25 08:00,2012-08-07 16:00,2012-07-25 08:00,2012-08-07 16:00,,2013-09-01 08:00,2013-09-12 16:00,,PT_Normal,,,,,OD6lf3e89UOZqqedm7Yo1A,,,,N,0,0,,,2012-06-19 11:46,2012-06-20 09:59,admin,admin,,,
658,82916,773,10506,849,1,100,N,N,N,CP_Drtn,TT_Task,DT_FixedDUR2,RV_OK,TK_Complete,4229EEL80,Electrical layouts IFA,,,,0,0,0,0,120,0,0,0,,2011-11-22 00:00,2011-12-08 00:00,2013-03-31 08:00,2013-03-31 08:00,,2012-06-02 00:00,2012-06-02 00:00,,,2011-12-04 08:00,2011-12-22 16:00,,,,,PT_Normal,,,,,JLRRyPFg2UeT56zgHnyYvw,,,,N,0,0,,,2012-06-19 11:46,2012-06-20 10:09,admin,admin,,,
659,82917,773,10506,849,1,100,N,N,N,CP_Drtn,TT_Task,DT_FixedDUR2,RV_OK,TK_Complete,4229EEL170,Electrical layouts IFD,,,,0,0,0,0,120,0,0,0,,2012-01-08 00:00,2012-01-29 00:00,2013-08-19 08:00,2013-08-19 08:00,,2012-06-02 00:00,2012-06-02 00:00,,,2012-03-04 08:00,2012-03-22 16:00,,,,,PT_Normal,,,,,21/laTE/s0WOWAHH8co0rQ,,,,N,0,0,,,2012-06-19 11:46,2012-06-20 10:09,admin,admin,,,
660,82918,773,10506,849,1,100,N,N,N,CP_Drtn,TT_Task,DT_FixedDUR2,RV_OK,TK_Complete,4229EEL20,Single line diagram -Approval,,,,0,0,0,0,40,0,0,0,,2011-08-21 00:00,2011-08-25 00:00,2013-09-15 08:00,2013-09-15 08:00,,2012-06-02 00:00,2012-06-02 00:00,,,2011-12-11 08:00,2011-12-15 16:00,,,,,PT_Normal,,,,,2VY+kmZbKkW4X4Mh26USVA,kHcphadgQQqJiQj5rZMbkQ,,,N,0,0,,,2012-06-19 11:46,2012-06-20 10:09,admin,admin,,,
661,82919,773,10506,849,1,0,N,N,N,CP_Drtn,TT_Task,DT_FixedDUR2,RV_OK,TK_NotStart,4229EEL230,Electrical layouts-Construction,,2200,40,80,0,0,0,80,0,0,0,,,,2013-08-25 08:00,2013-09-05 16:00,,2012-07-22 08:00,2012-08-02 16:00,2012-07-22 08:00,2012-08-02 16:00,2012-07-22 08:00,2012-08-02 16:00,,2013-08-25 08:00,2013-09-05 16:00,,PT_Normal,,,,,LR8Q1bBD3kulQwj34oqt0w,,,,N,0,0,,,2012-06-19 11:46,2012-06-20 09:59,admin,admin,,,
662,82920,773,10508,849,1,100,N,N,N,CP_Drtn,TT_Task,DT_FixedDUR2,RV_OK,TK_Complete,4229EEL60,T.E.R for Navigation aids,,,,0,0,0,0,120,0,0,0,,2011-10-17 08:00,2011-12-07 16:00,2013-01-14 08:00,2013-01-14 08:00,,2012-06-02 00:00,2012-06-02 00:00,,,2011-10-17 08:00,2011-11-13 16:00,,,,,PT_Normal,,,,,oXISvMOzzUKeRbPwQTLoow,+adQvSlUzkOZha6HG7fiRA,,,N,0,0,,,2012-06-19 11:46,2012-06-20 10:09,admin,admin,,,
663,82921,773,10508,849,1,100,N,N,N,CP_Drtn,TT_Task,DT_FixedDUR2,RV_OK,TK_Complete,4229EEL150,MRP for Navigation aids,,,,0,0,0,0,40,0,0,0,,2012-01-12 00:00,2012-01-18 00:00,2013-01-14 08:00,2013-01-14 08:00,,2012-06-02 00:00,2012-06-02 00:00,,,2012-01-16 08:00,2012-01-22 16:00,,,,,PT_Normal,,,,,EUEWotAaCkqrsaEmzdPX7g,uCQ7t7XtkE2pu5tmschigw,,,N,0,0,,,2012-06-19 11:46,2012-06-20 10:09,admin,admin,,,
664,82922,773,10508,849,1,100,N,N,N,CP_Drtn,TT_Task,DT_FixedDUR2,RV_OK,TK_Complete,4229EEL30,Issue MRQ for Navigation aids,,,,0,0,0,0,24,0,0,0,,2011-09-15 08:00,2011-09-19 16:00,2013-01-14 08:00,2013-01-14 08:00,,2012-06-02 00:00,2012-06-02 00:00,,,2011-09-15 08:00,2011-09-19 16:00,,,,,PT_Normal,,,,,smDWGlvjnEyHgZWXuQzeVw,fa+QQs2lrkWif6ZY5ZmI+Q,,,N,0,0,,,2012-06-19 11:46,2012-06-20 10:09,admin,admin,,,
665,82923,773,10508,849,1,0,N,N,N,CP_Drtn,TT_Task,DT_FixedDUR2,RV_OK,TK_Active,4229EEL200,T.E.R for Electrical bulk,,1640,0,8,0,0,0,120,0,0,0,,2012-02-02 00:00,,2013-03-31 08:00,2013-03-31 16:00,2012-06-03 16:00,2012-06-03 08:00,2012-06-03 16:00,2012-06-03 08:00,2012-06-03 16:00,2012-03-05 08:00,2012-03-25 16:00,,2013-03-31 08:00,2013-03-31 16:00,,PT_Normal,,,,,RH8/1wtRNEuprFUxGa7vtg,+adQvSlUzkOZha6HG7fiRA,,,N,0,0,,,2012-06-19 11:46,2012-06-20 09:59,admin,admin,,,
666,82924,773,10508,849,1,0,N,N,N,CP_Drtn,TT_Task,DT_FixedDUR2,RV_OK,TK_NotStart,4229EEL210,MRP for Electrical bulk,,1640,0,40,0,0,0,40,0,0,0,,,,2013-04-29 08:00,2013-05-05 16:00,,2012-07-02 08:00,2012-07-08 16:00,2012-07-02 08:00,2012-07-08 16:00,2012-07-02 08:00,2012-07-08 16:00,,2013-04-29 08:00,2013-05-05 16:00,,PT_Normal,,,,,aUWwJUuG00aRPGrEuxce8w,uCQ7t7XtkE2pu5tmschigw,,,N,0,0,,,2012-06-19 11:46,2012-06-20 09:59,admin,admin,,,
667,82925,773,10508,849,1,100,N,N,N,CP_Drtn,TT_Task,DT_FixedDUR2,RV_OK,TK_Complete,4229EEL140,Issue MRQ for Electrical bulk,,,,0,0,0,0,64,0,0,0,,2011-12-18 08:00,2011-12-27 16:00,2013-03-31 08:00,2013-03-31 08:00,,2012-06-02 00:00,2012-06-02 00:00,,,2011-12-18 08:00,2011-12-27 16:00,,,,,PT_Normal,,,,,FMqgQFkPwEmHIWsVM5+9Bw,fa+QQs2lrkWif6ZY5ZmI+Q,,,N,0,0,,,2012-06-19 11:46,2012-06-20 10:09,admin,admin,,,
668,82926,773,10508,849,1,0,N,N,N,CP_Drtn,TT_Task,DT_FixedDUR2,RV_OK,TK_Active,4229EEL300,V.P.R for Navigation aids,,2360,1064,280,0,0,0,104,0,0,0,,2012-04-26 00:00,,2013-08-11 08:00,2013-09-26 16:00,,2012-06-10 08:00,2012-07-26 16:00,2012-06-10 08:00,2012-07-26 16:00,2012-05-06 08:00,2012-05-22 16:00,,2013-08-11 08:00,2013-09-26 16:00,,PT_Normal,,,,,ph02vY4+vUqABRxOOBP2mg,,,,N,0,0,,,2012-06-19 11:46,2012-06-20 09:59,admin,admin,,,
669,82927,773,10508,849,1,0,N,N,N,CP_Drtn,TT_Task,DT_FixedDUR2,RV_OK,TK_Active,4229EEL280,V.P.R for solar power unit,,2160,1016,480,0,0,0,560,0,0,0,,2012-04-05 00:00,,2013-07-07 08:00,2013-09-26 16:00,,2012-06-10 08:00,2012-09-06 16:00,2012-06-10 08:00,2012-09-06 16:00,2012-05-06 08:00,2012-08-09 16:00,,2013-07-07 08:00,2013-09-26 16:00,,PT_Normal,,,,,+dCrUtftQke4/mRlruWCkw,,,,N,0,0,,,2012-06-19 11:46,2012-06-20 09:59,admin,admin,,,
670,82928,773,10508,849,1,100,N,N,N,CP_Drtn,TT_Task,DT_FixedDUR2,RV_OK,TK_Complete,4229EEL40,T.E.R for solar power unit,,,,0,0,0,0,120,0,0,0,,2011-10-13 00:00,2012-01-31 00:00,2012-12-24 08:00,2012-12-24 08:00,,2012-06-02 00:00,2012-06-02 00:00,,,2011-10-16 08:00,2011-11-03 16:00,,,,,PT_Normal,,,,,RQLEGkCASES7XJ+GAvJvzw,+adQvSlUzkOZha6HG7fiRA,,,N,0,0,,,2012-06-19 11:46,2012-06-20 10:09,admin,admin,,,
671,82929,773,10508,849,1,100,N,N,N,CP_Drtn,TT_Task,DT_FixedDUR2,RV_OK,TK_Complete,4229EEL130,MRP for solar power unit,,,,0,0,0,0,40,0,0,0,,2012-03-08 08:00,2012-03-28 00:00,2012-12-24 08:00,2012-12-24 08:00,,2012-06-02 00:00,2012-06-02 00:00,,,2012-03-08 08:00,2012-03-14 16:00,,,,,PT_Normal,,,,,dngKLlVNNESVhKbYi6ZQQg,uCQ7t7XtkE2pu5tmschigw,,,N,0,0,,,2012-06-19 11:46,2012-06-20 10:09,admin,admin,,,
672,82930,773,10508,849,1,100,N,N,N,CP_Drtn,TT_Task,DT_FixedDUR2,RV_OK,TK_Complete,4229EEL10,Issue MRQ for solar power unit,,,,0,0,0,0,56,0,0,0,,2011-08-15 08:00,2011-08-23 16:00,2012-12-24 08:00,2012-12-24 08:00,,2012-06-02 00:00,2012-06-02 00:00,,,2011-08-15 08:00,2011-08-23 16:00,,,,,PT_Normal,,,,,WmAJvILVGES5mrZupbXEPA,fa+QQs2lrkWif6ZY5ZmI+Q,,,N,0,0,,,2012-06-19 11:46,2012-06-20 10:09,admin,admin,,,
673,82931,773,10510,849,1,100,N,N,N,CP_Drtn,TT_Task,DT_FixedDUR2,RV_OK,TK_Complete,4229EIN70,Instrument I/O list issued for approval,,,,0,0,0,0,16,0,0,0,,2011-09-29 00:00,2011-10-09 00:00,2013-09-26 16:00,2013-09-26 16:00,,2012-06-02 00:00,2012-06-02 00:00,,,2011-10-13 08:00,2011-10-16 16:00,,,,,PT_Normal,,,,,s0zsyctrSkypzyYppCWw6A,GemY4T2B0EmUheDKIF6NWQ,,,N,0,0,,,2012-06-19 11:46,2012-06-20 10:09,admin,admin,,,
674,82932,773,10510,849,1,100,N,N,N,CP_Drtn,TT_Task,DT_FixedDUR2,RV_OK,TK_Complete,4229EIN140,Instrument  cable / tubing routing layouts IFA,,,,0,0,0,0,80,0,0,0,,2011-12-05 00:00,2012-01-26 00:00,2013-08-15 08:00,2013-08-15 08:00,,2012-06-02 00:00,2012-06-02 00:00,,,2011-12-11 08:00,2011-12-22 16:00,,,,,PT_Normal,,,,,TXmPDnw1M02PUrFrH5oLdQ,,,,N,0,0,,,2012-06-19 11:46,2012-06-20 10:09,admin,admin,,,
675,82933,773,10510,849,1,0,N,N,N,CP_Drtn,TT_Task,DT_FixedDUR2,RV_OK,TK_NotStart,4229EIN440,Instrument hook-ups issued for construction,,2320,1024,80,0,0,0,80,0,0,0,,,,2013-09-15 08:00,2013-09-26 16:00,,2012-07-22 08:00,2012-08-02 16:00,2012-07-22 08:00,2012-08-02 16:00,2012-07-22 08:00,2012-08-02 16:00,,2013-09-15 08:00,2013-09-26 16:00,,PT_Normal,,,,,0a8SJW0tkUKDpkGWnCQs9w,Q6A1MJ+tAkeyDTn8ferz6A,,,N,0,0,,,2012-06-19 11:46,2012-06-20 09:59,admin,admin,,,
676,82934,773,10510,849,1,0,N,N,N,CP_Drtn,TT_Task,DT_FixedDUR2,RV_OK,TK_NotStart,4229EIN460,Instrument  cable / tubing routing layouts IFC,,2200,0,80,0,0,0,80,0,0,0,,,,2013-09-01 08:00,2013-09-12 16:00,,2012-07-29 08:00,2012-08-09 16:00,2012-07-29 08:00,2012-08-09 16:00,2012-07-29 08:00,2012-08-09 16:00,,2013-09-01 08:00,2013-09-12 16:00,,PT_Normal,,,,,e+6Yc9Zet0C3uEuDg2nZIg,avZG58y2z0Gkt+UeaJ1/ug,,,N,0,0,,,2012-06-19 11:46,2012-06-20 09:59,admin,admin,,,
677,82935,773,10510,849,1,0,N,N,N,CP_Drtn,TT_Task,DT_FixedDUR2,RV_OK,TK_NotStart,4229EIN410,Instrument I/O list issued for construction,,2440,1144,40,0,0,0,40,0,0,0,,,,2013-09-22 08:00,2013-09-26 16:00,,2012-07-08 08:00,2012-07-12 16:00,2012-07-08 08:00,2012-07-12 16:00,2012-07-08 08:00,2012-07-12 16:00,,2013-09-22 08:00,2013-09-26 16:00,,PT_Normal,,,,,QaJksuDVRk2ZxH/Ah44Cig,GemY4T2B0EmUheDKIF6NWQ,,,N,0,0,,,2012-06-19 11:46,2012-06-20 09:59,admin,admin,,,
678,82936,773,10510,849,1,0,N,N,N,CP_Drtn,TT_Task,DT_FixedDUR2,RV_OK,TK_NotStart,4229EIN400,Instrument index issued for construction,,2440,0,40,0,0,0,40,0,0,0,,,,2013-09-15 08:00,2013-09-19 16:00,,2012-07-01 08:00,2012-07-05 16:00,2012-07-01 08:00,2012-07-05 16:00,2012-07-01 08:00,2012-07-05 16:00,,2013-09-15 08:00,2013-09-19 16:00,,PT_Normal,,,,,Sf4bKY7Uake+nvAbM5gCog,tEpanMSzcU6QCV0SomSrAg,,,N,0,0,,,2012-06-19 11:46,2012-06-20 09:59,admin,admin,,,
679,82937,773,10510,849,1,100,N,N,N,CP_Drtn,TT_Task,DT_FixedDUR2,RV_OK,TK_Complete,4229EIN130,Instrument index issued for design,,,,0,0,0,0,40,0,0,0,,2011-11-28 00:00,2011-12-13 00:00,2013-09-26 16:00,2013-09-26 16:00,,2012-06-02 00:00,2012-06-02 00:00,,,2011-12-08 08:00,2011-12-14 16:00,,,,,PT_Normal,,,,,BXRnD/qn9EGLHp9AHhEE1Q,,,,N,0,0,,,2012-06-19 11:46,2012-06-20 10:09,admin,admin,,,
680,82938,773,10510,849,1,100,N,N,N,CP_Drtn,TT_Task,DT_FixedDUR2,RV_OK,TK_Complete,4229EIN150,Instrument I/O list issued for design,,,,0,0,0,0,16,0,0,0,,2011-10-23 00:00,2011-12-16 00:00,2013-09-26 16:00,2013-09-26 16:00,,2012-06-02 00:00,2012-06-02 00:00,,,2011-12-15 08:00,2011-12-18 16:00,,,,,PT_Normal,,,,,SCxVpR2D/EiujMKl193SjA,,,,N,0,0,,,2012-06-19 11:46,2012-06-20 10:09,admin,admin,,,
681,82939,773,10510,849,1,100,N,N,N,CP_Drtn,TT_Task,DT_FixedDUR2,RV_OK,TK_Complete,4229EIN300,Instrument cable / tubing schedule for design,,,,0,0,0,0,40,0,0,0,,2012-01-24 00:00,2012-01-24 00:00,2013-09-26 16:00,2013-09-26 16:00,,2012-06-02 00:00,2012-06-02 00:00,,,2012-03-04 08:00,2012-03-08 16:00,,,,,PT_Normal,,,,,tCfjfORs606CnexGXyLwig,,,,N,0,0,,,2012-06-19 11:46,2012-06-20 10:09,admin,admin,,,
682,82940,773,10510,849,1,100,N,N,N,CP_Drtn,TT_Task,DT_FixedDUR2,RV_OK,TK_Complete,4229EIN310,Instrument hook-ups issued for design,,,,0,0,0,0,80,0,0,0,,2012-01-10 00:00,2012-02-02 00:00,2013-09-26 16:00,2013-09-26 16:00,,2012-06-02 00:00,2012-06-02 00:00,,,2012-03-04 08:00,2012-03-15 16:00,,,,,PT_Normal,,,,,F745DBNQgkyyP63lF7OS8g,,,,N,0,0,,,2012-06-19 11:46,2012-06-20 10:09,admin,admin,,,
683,82941,773,10510,849,1,0,N,N,N,CP_Drtn,TT_Task,DT_FixedDUR2,RV_OK,TK_NotStart,4229EIN390,Safeguard system schematic diagram- Construction,,2200,904,80,0,0,0,80,0,0,0,,,,2013-09-15 08:00,2013-09-26 16:00,,2012-08-12 08:00,2012-08-30 16:00,2012-08-12 08:00,2012-08-30 16:00,2012-08-12 08:00,2012-08-30 16:00,,2013-09-15 08:00,2013-09-26 16:00,,PT_Normal,,,,,iWmtn9DcfUC9XBovey3asw,,,,N,0,0,,,2012-06-19 11:46,2012-06-20 09:59,admin,admin,,,
684,82942,773,10510,849,1,0,N,N,N,CP_Drtn,TT_Task,DT_FixedDUR2,RV_OK,TK_NotStart,4229EIN430,Instrument wiring diagram-Construction,,2160,864,80,0,0,0,80,0,0,0,,,,2013-09-15 08:00,2013-09-26 16:00,,2012-08-26 08:00,2012-09-06 16:00,2012-08-26 08:00,2012-09-06 16:00,2012-08-26 08:00,2012-09-06 16:00,,2013-09-15 08:00,2013-09-26 16:00,,PT_Normal,,,,,+C5K1tcqwkSc3TvM8KOg9w,,,,N,0,0,,,2012-06-19 11:46,2012-06-20 09:59,admin,admin,,,
685,82943,773,10510,849,1,100,N,N,N,CP_Drtn,TT_Task,DT_FixedDUR2,RV_OK,TK_Complete,4229EIN120,Instrument layouts -Approval,,,,0,0,0,0,120,0,0,0,,2011-11-22 00:00,2011-12-15 00:00,2013-09-26 16:00,2013-09-26 16:00,,2012-06-02 00:00,2012-06-02 00:00,,,2011-12-04 08:00,2011-12-22 16:00,,,,,PT_Normal,,,,,hh4bXZ5KQ0+dWuP/zuivgw,,,,N,0,0,,,2012-06-19 11:46,2012-06-20 10:09,admin,admin,,,
686,82944,773,10510,849,1,100,N,N,N,CP_Drtn,TT_Task,DT_FixedDUR2,RV_OK,TK_Complete,4229EIN270,Instrument layouts -Design,,,,0,0,0,0,0,0,0,0,,2012-01-29 08:00,2012-02-16 00:00,2013-09-26 16:00,2013-09-26 16:00,,2012-06-02 00:00,2012-06-02 00:00,,,2012-01-29 08:00,2012-01-29 08:00,,,,,PT_Normal,,,,,kSf98lrRdUCHZQYL9a5FkQ,,,,N,0,0,,,2012-06-19 11:46,2012-06-20 10:09,admin,admin,,,
687,82945,773,10510,849,1,0,N,N,N,CP_Drtn,TT_Task,DT_FixedDUR2,RV_OK,TK_Active,4229EIN580,Instrument loop diagram-Design,,2656,0,16,0,0,0,80,0,0,0,,2012-03-28 00:00,,2013-09-24 08:00,2013-09-25 16:00,2012-06-04 16:00,2012-06-03 08:00,2012-06-04 16:00,2012-06-03 08:00,2012-06-04 16:00,2012-04-01 08:00,2012-04-12 16:00,,2013-09-24 08:00,2013-09-25 16:00,,PT_Normal,,,,,Jnl44fkCukOtoVtXdn9JLw,,,,N,0,0,,,2012-06-19 11:46,2012-06-20 09:59,admin,admin,,,
688,82946,773,10510,849,1,100,N,N,N,CP_Drtn,TT_Task,DT_FixedDUR2,RV_OK,TK_Complete,4229EIN570,Instrument loop Diagram-Approval,,,,0,0,0,0,8,0,0,0,,2012-02-22 00:00,2012-02-26 00:00,2013-09-24 08:00,2013-09-24 08:00,,2012-06-02 00:00,2012-06-02 00:00,,,2012-03-04 08:00,2012-03-04 16:00,,,,,PT_Normal,,,,,tFy6V2cmaUmIHzmiIsGaXQ,,,,N,0,0,,,2012-06-19 11:46,2012-06-20 10:09,admin,admin,,,
689,82947,773,10510,849,1,0,N,N,N,CP_Drtn,TT_Task,DT_FixedDUR2,RV_OK,TK_NotStart,4229EIN590,Instrument loop diagram-Construction,,2328,1032,8,0,0,0,8,0,0,0,,,,2013-09-26 08:00,2013-09-26 16:00,,2012-08-01 08:00,2012-08-01 16:00,2012-08-01 08:00,2012-08-01 16:00,2012-08-01 08:00,2012-08-01 16:00,,2013-09-26 08:00,2013-09-26 16:00,,PT_Normal,,,,,p3hvnXd9Bk698tXfW9BD9g,,,,N,0,0,,,2012-06-19 11:46,2012-06-20 09:59,admin,admin,,,
690,82948,773,10510,849,1,100,N,N,N,CP_Drtn,TT_Task,DT_FixedDUR2,RV_OK,TK_Complete,4229EIN60,Instrument index -Approval,,,,0,0,0,0,40,0,0,0,,2011-10-26 00:00,2011-11-20 00:00,2013-09-26 16:00,2013-09-26 16:00,,2012-06-02 00:00,2012-06-02 00:00,,,2011-10-30 08:00,2011-11-03 16:00,,,,,PT_Normal,,,,,jNR8U3qYPkGhhOomNzIldw,,,,N,0,0,,,2012-06-19 11:46,2012-06-20 10:09,admin,admin,,,
691,82949,773,10510,849,1,100,N,N,N,CP_Drtn,TT_Task,DT_FixedDUR2,RV_OK,TK_Complete,4229EIN200,Instrument cable / tubing schedule for approval,,,,0,0,0,0,40,0,0,0,2012-01-09 08:00,2012-01-05 00:00,2012-01-11 00:00,2013-09-24 08:00,2013-09-24 08:00,,2012-06-02 00:00,2012-06-02 00:00,,,2012-01-09 08:00,2012-01-15 16:00,,,,CS_MSOA,PT_Normal,,,,,u7rtfqRP60CbYITG5OtIEg,+fuN/Ikg/kK9fNQ0HqYtyQ,,,N,0,0,,,2012-06-19 11:46,2012-06-20 10:09,admin,admin,,,
692,82950,773,10510,849,1,0,N,N,N,CP_Drtn,TT_Task,DT_FixedDUR2,RV_OK,TK_NotStart,4229EIN470,Instrument cable / tubing schedule for construction,,2240,944,40,0,0,0,40,0,0,0,,,,2013-09-22 08:00,2013-09-26 16:00,,2012-08-12 08:00,2012-08-16 16:00,2012-08-12 08:00,2012-08-16 16:00,2012-08-12 08:00,2012-08-16 16:00,,2013-09-22 08:00,2013-09-26 16:00,,PT_Normal,,,,,JzfUoaqTEUenXvUySz87sQ,MFJOUGZvAkSTBODSA6uthQ,,,N,0,0,,,2012-06-19 11:46,2012-06-20 09:59,admin,admin,,,
693,82951,773,10510,849,1,0,N,N,N,CP_Drtn,TT_Task,DT_FixedDUR2,RV_OK,TK_NotStart,4229EIN450,Instrument layouts -Construction,,2200,0,80,0,0,0,80,0,0,0,,,,2013-08-25 08:00,2013-09-05 16:00,,2012-07-22 08:00,2012-08-02 16:00,2012-07-22 08:00,2012-08-02 16:00,2012-07-22 08:00,2012-08-02 16:00,,2013-08-25 08:00,2013-09-05 16:00,,PT_Normal,,,,,rFaQpp9kDUaYtttepEFcfQ,,,,N,0,0,,,2012-06-19 11:46,2012-06-20 09:59,admin,admin,,,
694,82952,773,10510,849,1,100,N,N,N,CP_Drtn,TT_Task,DT_FixedDUR2,RV_OK,TK_Complete,4229EIN100,Functional loop diagram-Approval,,,,0,0,0,0,120,0,0,0,,2012-01-05 00:00,2012-01-11 00:00,2013-09-24 08:00,2013-09-24 08:00,,2012-06-02 00:00,2012-06-02 00:00,,,2012-01-17 08:00,2012-02-07 16:00,,,,,PT_Normal,,,,,gPBGtZs+AkaX97wx0lBTpw,,,,N,0,0,,,2012-06-19 11:46,2012-06-20 10:09,admin,admin,,,
695,82953,773,10510,849,1,100,N,N,N,CP_Drtn,TT_Task,DT_FixedDUR2,RV_OK,TK_Complete,4229EIN240,Functional loop diagram-Design,,,,0,0,0,0,48,0,0,0,,2012-01-15 00:00,2012-02-27 00:00,2013-09-26 16:00,2013-09-26 16:00,,2012-06-02 00:00,2012-06-02 00:00,,,2012-03-04 08:00,2012-03-11 16:00,,,,,PT_Normal,,,,,tjf6RPsmFEeWjYUSY43jxg,,,,N,0,0,,,2012-06-19 11:46,2012-06-20 10:09,admin,admin,,,
696,82954,773,10510,849,1,0,N,N,N,CP_Drtn,TT_Task,DT_FixedDUR2,RV_OK,TK_NotStart,4229EIN420,Functional loop diagram-Construction,,2328,0,120,0,0,0,120,0,0,0,,,,2013-09-05 08:00,2013-09-25 16:00,,2012-07-11 08:00,2012-07-31 16:00,2012-07-11 08:00,2012-07-31 16:00,2012-07-11 08:00,2012-07-31 16:00,,2013-09-05 08:00,2013-09-25 16:00,,PT_Normal,,,,,jJKVJi72806GDn4/YI7uEg,,,,N,0,0,,,2012-06-19 11:46,2012-06-20 09:59,admin,admin,,,
697,82955,773,10510,849,1,100,N,N,N,CP_Drtn,TT_Task,DT_FixedDUR2,RV_OK,TK_Complete,4229EIN520,Instrument wiring diagram-Approval,,,,0,0,0,0,80,0,0,0,,2011-12-09 00:00,2011-12-14 00:00,2013-09-24 08:00,2013-09-24 08:00,,2012-06-02 00:00,2012-06-02 00:00,,,2012-01-11 08:00,2012-01-24 16:00,,,,,PT_Normal,,,,,Zj+HSC2XSU2hX7ZlnI3UEg,,,,N,0,0,,,2012-06-19 11:46,2012-06-20 10:09,admin,admin,,,
698,82956,773,10510,849,1,100,N,N,N,CP_Drtn,TT_Task,DT_FixedDUR2,RV_OK,TK_Complete,4229EIN530,Instrument wiring diagram-Design,,,,0,0,0,0,80,0,0,0,,2012-01-15 00:00,2012-01-24 00:00,2013-09-26 16:00,2013-09-26 16:00,,2012-06-02 00:00,2012-06-02 00:00,,,2012-02-13 08:00,2012-02-26 16:00,,,,,PT_Normal,,,,,/LL1RS+SSk+vL8q7qeRjCA,,,,N,0,0,,,2012-06-19 11:46,2012-06-20 10:09,admin,admin,,,
699,82957,773,10510,849,1,100,N,N,N,CP_Drtn,TT_Task,DT_FixedDUR2,RV_OK,TK_Complete,4229EIN280,Instrument cable / tubing routing layouts IFD,,,,0,0,0,0,64,0,0,0,,2012-02-29 00:00,2012-02-29 00:00,2013-04-15 08:00,2013-04-15 08:00,,2012-06-02 00:00,2012-06-02 00:00,,,2012-03-04 08:00,2012-03-13 16:00,,,,,PT_Normal,,,,,hoi7QdVcGUivzFn9LGgYRA,,,,N,0,0,,,2012-06-19 11:46,2012-06-20 10:09,admin,admin,,,
700,82958,773,10510,849,1,100,N,N,N,CP_Drtn,TT_Task,DT_FixedDUR2,RV_OK,TK_Complete,4229EIN190,Instrument hook-ups issued for approval,,,,0,0,0,0,80,0,0,0,,2011-12-12 08:00,2012-01-02 00:00,2013-09-26 16:00,2013-09-26 16:00,,2012-06-02 00:00,2012-06-02 00:00,,,2011-12-12 08:00,2011-12-25 16:00,,,,,PT_Normal,,,,,LMWQ0Kdsr0eTM/mkzNLULg,,,,N,0,0,,,2012-06-19 11:46,2012-06-20 10:09,admin,admin,,,
701,82959,773,10512,849,1,0,N,N,N,CP_Drtn,TT_Task,DT_FixedDUR2,RV_OK,TK_Active,4229EIN610,Additional shutdown valves T.E.R,,1280,0,112,0,0,0,112,0,0,0,,2012-05-27 00:00,,2013-01-27 08:00,2013-02-13 16:00,,2012-06-03 08:00,2012-06-20 16:00,2012-06-03 08:00,2012-06-20 16:00,2012-05-31 08:00,2012-06-19 16:00,,2013-01-27 08:00,2013-02-13 16:00,,PT_Normal,,,,,ymUpkv4tW0K4S5He+KWsuA,,,,N,0,0,,,2012-06-19 11:46,2012-06-20 09:59,admin,admin,,,
702,82960,773,10512,849,1,0,N,N,N,CP_Drtn,TT_Task,DT_FixedDUR2,RV_OK,TK_NotStart,4229EIN620,Additional shutdown valves MRP,,2320,0,40,0,0,0,40,0,0,0,,,,2013-09-11 08:00,2013-09-17 16:00,,2012-07-18 08:00,2012-07-24 16:00,2012-07-18 08:00,2012-07-24 16:00,2012-07-18 08:00,2012-07-24 16:00,,2013-09-11 08:00,2013-09-17 16:00,,PT_Normal,,,,,RtnmgJ0HoEWf+OXvC5tuOg,,,,N,0,0,,,2012-06-19 11:46,2012-06-20 09:59,admin,admin,,,
703,82961,773,10512,849,1,100,N,N,N,CP_Drtn,TT_Task,DT_FixedDUR2,RV_OK,TK_Complete,4229EIN600,Additional shutdown valves MRQ,,,,0,0,0,0,80,0,0,0,,2012-04-29 08:00,2012-05-06 00:00,2013-01-26 16:00,2013-01-26 16:00,,2012-06-02 00:00,2012-06-02 00:00,,,2012-04-29 08:00,2012-05-10 16:00,,,,,PT_Normal,,,,,m7z2BIZl/0eicHiALAK35A,,,,N,0,0,,,2012-06-19 11:46,2012-06-20 10:09,admin,admin,,,
704,82962,773,10512,849,1,0,N,N,N,CP_Drtn,TT_Task,DT_FixedDUR2,RV_OK,TK_Active,4229EPR300,V.P.R for Shutdown valves,,1896,600,680,0,0,0,680,0,0,0,,2012-04-29 00:00,,2013-06-02 08:00,2013-09-26 16:00,,2012-06-20 08:00,2012-10-30 16:00,2012-06-20 08:00,2012-10-30 16:00,2012-06-20 08:00,2012-10-30 16:00,,2013-06-02 08:00,2013-09-26 16:00,,PT_Normal,,,,,Cf4OIekYTUOuck7NmmVG5A,,,,N,0,0,,,2012-06-19 11:46,2012-06-20 09:59,admin,admin,,,
705,82963,773,10512,849,1,100,N,N,N,CP_Drtn,TT_Task,DT_FixedDUR2,RV_OK,TK_Complete,4229EIN550,V.P.R for Instrument Mechanical bulk,,,,0,0,0,0,240,0,0,0,,2012-05-31 00:00,2012-05-31 00:00,2013-09-26 16:00,2013-09-26 16:00,,2012-06-02 00:00,2012-06-02 00:00,,,2012-07-22 08:00,2012-09-06 16:00,,,,,PT_Normal,,,,,NsTebKtLDkuqk/h9k+grgg,,,,N,0,0,,,2012-06-19 11:46,2012-06-20 10:09,admin,admin,,,
706,82964,773,10512,849,1,0,N,N,N,CP_Drtn,TT_Task,DT_FixedDUR2,RV_OK,TK_NotStart,4229EIN560,V.P.R for Instrument Electrical bulk,,1968,672,160,0,0,0,160,0,0,0,,,,2013-09-01 08:00,2013-09-26 16:00,,2012-09-13 08:00,2012-10-10 16:00,2012-09-13 08:00,2012-10-10 16:00,2012-09-13 08:00,2012-10-10 16:00,,2013-09-01 08:00,2013-09-26 16:00,,PT_Normal,,,,,5QHNHswZKESjk7adLTdjJw,,,,N,0,0,,,2012-06-19 11:46,2012-06-20 09:59,admin,admin,,,
707,82965,773,10512,849,1,0,N,N,N,CP_Drtn,TT_Task,DT_FixedDUR2,RV_OK,TK_NotStart,4229EIN540,V.P.R for field instruments,,1896,600,280,0,0,0,280,0,0,0,,,,2013-08-11 08:00,2013-09-26 16:00,,2012-09-05 08:00,2012-10-30 16:00,2012-09-05 08:00,2012-10-30 16:00,2012-09-05 08:00,2012-10-30 16:00,,2013-08-11 08:00,2013-09-26 16:00,,PT_Normal,,,,,PfpGK2HthkeEwIi5xyI1Pw,,,,N,0,0,,,2012-06-19 11:46,2012-06-20 09:59,admin,admin,,,
708,82966,773,10512,849,1,100,N,N,N,CP_Drtn,TT_Task,DT_FixedDUR2,RV_OK,TK_Complete,4229EIN80,T.E.R for  SGS,,,,0,0,0,0,200,0,0,0,,2011-09-28 08:00,2012-01-09 16:00,2013-01-14 08:00,2013-01-14 08:00,,2012-06-02 00:00,2012-06-02 00:00,,,2011-09-28 08:00,2011-11-02 16:00,,,,,PT_Normal,,,,,vGoY/SAhcUGkqo7Qo+rZZw,+adQvSlUzkOZha6HG7fiRA,,,N,0,0,,,2012-06-19 11:46,2012-06-20 10:09,admin,admin,,,
709,82967,773,10512,849,1,100,N,N,N,CP_Drtn,TT_Task,DT_FixedDUR2,RV_OK,TK_Complete,4229EIN210,MRP for SGS,,,,0,0,0,0,40,0,0,0,,2012-03-08 08:00,2012-05-08 00:00,2013-01-14 08:00,2013-01-14 08:00,,2012-06-02 00:00,2012-06-02 00:00,,,2012-03-08 08:00,2012-03-14 16:00,,,,,PT_Normal,,,,,/8Lb+G3kFEKfjUwsrnoGwg,uCQ7t7XtkE2pu5tmschigw,,,N,0,0,,,2012-06-19 11:46,2012-06-20 10:09,admin,admin,,,
710,82968,773,10512,849,1,100,N,N,N,CP_Drtn,TT_Task,DT_FixedDUR2,RV_OK,TK_Complete,4229EIN10,Issue MRQ for SGS,,,,0,0,0,0,64,0,0,0,,2011-08-15 08:00,2011-08-24 16:00,2013-01-14 08:00,2013-01-14 08:00,,2012-06-02 00:00,2012-06-02 00:00,,,2011-08-15 08:00,2011-08-24 16:00,,,,,PT_Normal,,,,,G3oioX4X+EWbmWbE0LaTiA,fa+QQs2lrkWif6ZY5ZmI+Q,,,N,0,0,,,2012-06-19 11:46,2012-06-20 10:09,admin,admin,,,
711,82969,773,10512,849,1,100,N,N,N,CP_Drtn,TT_Task,DT_FixedDUR2,RV_OK,TK_Complete,4229EIN220,T.E.R for SDV,,,,0,0,0,0,160,0,0,0,,2011-11-28 00:00,2012-02-01 00:00,2013-09-26 16:00,2013-09-26 16:00,,2012-06-02 00:00,2012-06-02 00:00,,,2011-12-04 08:00,2011-12-29 16:00,,,,,PT_Normal,,,,,vRZ8vG5sKkakRyJHvtonSA,QZSem8n3HEqSrXo4nZ4rrA,,,N,0,0,,,2012-06-19 11:47,2012-06-20 10:09,admin,admin,,,
712,82970,773,10512,849,1,100,N,N,N,CP_Drtn,TT_Task,DT_FixedDUR2,RV_OK,TK_Complete,4229EIN330,MRP for SDV,,,,0,0,0,0,40,0,0,0,,2012-04-22 00:00,2012-04-26 00:00,2013-01-14 08:00,2013-01-14 08:00,,2012-06-02 00:00,2012-06-02 00:00,,,2012-04-29 08:00,2012-05-03 16:00,,,,,PT_Normal,,,,,Qrp354VrY0m2Ki90WuATVA,ulMsewoMhEiApbF+oxOLEA,,,N,0,0,,,2012-06-19 11:47,2012-06-20 10:09,admin,admin,,,
713,82971,773,10512,849,1,100,N,N,N,CP_Drtn,TT_Task,DT_FixedDUR2,RV_OK,TK_Complete,4229EIN50,Issue MRQ for SDV,,,,0,0,0,0,40,0,0,0,,2011-10-12 08:48,2011-10-26 00:00,2013-09-26 16:00,2013-09-26 16:00,,2012-06-02 00:00,2012-06-02 00:00,,,2011-10-12 08:48,2011-10-19 08:48,,,,,PT_Normal,,,,,l5buY9rDhkysglNTcGTcAQ,oARo+yhXM0mbfyeEpyVYrw,,,N,0,0,,,2012-06-19 11:47,2012-06-20 10:09,admin,admin,,,
714,82972,773,10512,849,1,0,N,N,N,CP_Drtn,TT_Task,DT_FixedDUR2,RV_OK,TK_NotStart,4229EIN500,V.P.R for choke valves,,1688,544,720,0,0,0,720,0,0,0,,,,2013-05-26 08:00,2013-09-26 16:00,,2012-07-19 08:00,2012-12-05 16:00,2012-07-19 08:00,2012-12-05 16:00,2012-07-19 08:00,2012-12-05 16:00,,2013-05-26 08:00,2013-09-26 16:00,,PT_Normal,,,,,gjVPgHsYUkGOz5+ZzE49wA,,,,N,0,0,,,2012-06-19 11:47,2012-06-20 09:59,admin,admin,,,
715,82973,773,10512,849,1,0,N,N,N,CP_Drtn,TT_Task,DT_FixedDUR2,RV_OK,TK_NotStart,4229EIN510,V.P.R for Pressure regulator valves,,1760,616,720,0,0,0,720,0,0,0,,,,2013-05-26 08:00,2013-09-26 16:00,,2012-07-08 08:00,2012-11-22 16:00,2012-07-08 08:00,2012-11-22 16:00,2012-07-08 08:00,2012-11-22 16:00,,2013-05-26 08:00,2013-09-26 16:00,,PT_Normal,,,,,bn2Z4DR5S0yaJAXgGldBBg,,,,N,0,0,,,2012-06-19 11:47,2012-06-20 09:59,admin,admin,,,
716,82974,773,10512,849,1,0,N,N,N,CP_Drtn,TT_Task,DT_FixedDUR2,RV_OK,TK_Active,4229EIN490,V.P.R for MPFM,,1960,816,720,0,0,0,720,0,0,0,,2012-03-08 00:00,,2013-05-26 08:00,2013-09-26 16:00,,2012-06-03 08:00,2012-10-11 16:00,2012-06-03 08:00,2012-10-11 16:00,2012-05-06 08:00,2012-09-13 16:00,,2013-05-26 08:00,2013-09-26 16:00,,PT_Normal,,,,,6eV813ZV50uYiY0aPVF0pQ,,,,N,0,0,,,2012-06-19 11:47,2012-06-20 09:59,admin,admin,,,
717,82975,773,10512,849,1,0,N,N,N,CP_Drtn,TT_Task,DT_FixedDUR2,RV_OK,TK_Active,4229EIN480,V.P.R for safeguard system,,1944,0,480,0,0,0,640,0,0,0,,2012-05-10 00:00,,2013-07-07 08:00,2013-09-26 16:00,,2012-07-17 08:00,2012-10-15 16:00,2012-07-17 08:00,2012-10-15 16:00,2012-06-25 08:00,2012-10-28 16:00,,2013-07-07 08:00,2013-09-26 16:00,,PT_Normal,,,,,8GqOcLjUh06tuaaGahsdmQ,,,,N,0,0,,,2012-06-19 11:47,2012-06-20 09:59,admin,admin,,,
718,82976,773,10512,849,1,0,N,N,N,CP_Drtn,TT_Task,DT_FixedDUR2,RV_OK,TK_Active,4229EIN360,T.E.R for Instrument electrical bulk,,1728,0,8,0,0,0,120,0,0,0,,2012-03-26 00:00,,2013-04-15 08:00,2013-04-15 16:00,2012-06-03 16:00,2012-06-03 08:00,2012-06-03 16:00,2012-06-03 08:00,2012-06-03 16:00,2012-04-25 08:00,2012-05-15 16:00,,2013-04-15 08:00,2013-04-15 16:00,,PT_Normal,,,,,yFOriCaWBkSRHnU8wOFE8w,ErUDIEAHkEWZWIjcmb+Ptg,,,N,0,0,,,2012-06-19 11:47,2012-06-20 09:59,admin,admin,,,
719,82977,773,10512,849,1,0,N,N,N,CP_Drtn,TT_Task,DT_FixedDUR2,RV_OK,TK_NotStart,4229EIN380,MRP for Instrument electrical bulk,,1728,0,40,0,0,0,40,0,0,0,,,,2013-05-14 08:00,2013-05-20 16:00,,2012-07-02 08:00,2012-07-08 16:00,2012-07-02 08:00,2012-07-08 16:00,2012-07-02 08:00,2012-07-08 16:00,,2013-05-14 08:00,2013-05-20 16:00,,PT_Normal,,,,,29FKAupoH025NCl57A/Q1Q,qah8G7VN60mBQqGfXfCzXw,,,N,0,0,,,2012-06-19 11:47,2012-06-20 09:59,admin,admin,,,
720,82978,773,10512,849,1,100,N,N,N,CP_Drtn,TT_Task,DT_FixedDUR2,RV_OK,TK_Complete,4229EIN230,Issue MRQ for Instrument electrical bulk,,,,0,0,0,0,80,0,0,0,2012-01-16 00:00,2012-01-16 08:00,2012-02-27 00:00,2013-04-15 08:00,2013-04-15 08:00,,2012-06-02 00:00,2012-06-02 00:00,,,2012-01-16 08:00,2012-01-30 16:00,,,,CS_MSOA,PT_Normal,,,,,acOuUTIq1k+u7SMAJMSp3g,azlRJTqqs0W0Ln7rWFbhVg,,,N,0,0,,,2012-06-19 11:47,2012-06-20 10:09,admin,admin,,,
721,82979,773,10512,849,1,100,N,N,N,CP_Drtn,TT_Task,DT_FixedDUR2,RV_OK,TK_Complete,4229EIN340,T.E.R for Instrument  Mechanical bulk,,,,0,0,0,0,120,0,0,0,,2012-03-27 00:00,2012-03-27 00:00,2013-08-15 08:00,2013-08-15 08:00,,2012-06-02 00:00,2012-06-02 00:00,,,2012-04-01 08:00,2012-04-19 16:00,,,,,PT_Normal,,,,,KVCJ5jdA1Ui2Zl+e1Gltyw,4hM7c1CEokC8T6AEFK3z1g,,,N,0,0,,,2012-06-19 11:47,2012-06-20 10:09,admin,admin,,,
722,82980,773,10512,849,1,100,N,N,N,CP_Drtn,TT_Task,DT_FixedDUR2,RV_OK,TK_Complete,4229EIN370,MRP for Instrument Mechanical bulk,,,,0,0,0,0,40,0,0,0,,2012-05-31 00:00,2012-05-31 16:00,2013-08-15 08:00,2013-08-15 08:00,,2012-06-02 00:00,2012-06-02 00:00,,,2012-05-27 08:00,2012-05-31 16:00,,,,,PT_Normal,,,,,qnsRw5G700maXe4Dvq2hWg,qQiaMneyqke6pEtTAv4l9g,,,N,0,0,,,2012-06-19 11:47,2012-06-20 10:09,admin,admin,,,
723,82981,773,10512,849,1,100,N,N,N,CP_Drtn,TT_Task,DT_FixedDUR2,RV_OK,TK_Complete,4229EIN180,Issue MRQ for Instrument mechanical bulk,,,,0,0,0,0,80,0,0,0,,2012-01-08 08:00,2012-02-19 00:00,2013-08-15 08:00,2013-08-15 08:00,,2012-06-02 00:00,2012-06-02 00:00,,,2012-01-08 08:00,2012-01-19 16:00,,,,,PT_Normal,,,,,m0d3sDEO0UedmHr21xz6LA,xkY73sBs+E6w0i1R8ODp4g,,,N,0,0,,,2012-06-19 11:47,2012-06-20 10:09,admin,admin,,,
724,82982,773,10512,849,1,100,N,N,N,CP_Drtn,TT_Task,DT_FixedDUR2,RV_OK,TK_Complete,4229EIN250,T.E.R for field Instrument,,,,0,0,0,0,120,0,0,0,2012-01-17 00:00,2012-01-17 08:00,2012-05-02 16:00,2013-03-18 16:00,2013-03-18 16:00,,2012-06-02 00:00,2012-06-02 00:00,,,2012-01-17 08:00,2012-02-07 16:00,,,,CS_MSOA,PT_Normal,,,,,Fac2uUibLkyckKMDeP3xOg,+adQvSlUzkOZha6HG7fiRA,,,N,0,0,,,2012-06-19 11:47,2012-06-20 10:09,admin,admin,,,
725,82983,773,10512,849,1,0,N,N,N,CP_Drtn,TT_Task,DT_FixedDUR2,RV_OK,TK_NotStart,4229EIN350,MRP for field Instrument,,1576,0,40,0,0,0,40,0,0,0,,,,2013-04-09 08:00,2013-04-15 16:00,,2012-06-24 08:00,2012-06-28 16:00,2012-06-24 08:00,2012-06-28 16:00,2012-06-24 08:00,2012-06-28 16:00,,2013-04-09 08:00,2013-04-15 16:00,,PT_Normal,,,,,L4ZcN1pf6Eibr0EVTtpiaQ,uCQ7t7XtkE2pu5tmschigw,,,N,0,0,,,2012-06-19 11:47,2012-06-20 09:59,admin,admin,,,
726,82984,773,10512,849,1,100,N,N,N,CP_Drtn,TT_Task,DT_FixedDUR2,RV_OK,TK_Complete,4229EIN90,Issue MRQ for field Instrument,,,,0,0,0,0,40,0,0,0,,2011-11-16 00:00,2011-12-13 00:00,2013-03-18 16:00,2013-03-18 16:00,,2012-06-02 00:00,2012-06-02 00:00,,,2011-12-04 08:00,2011-12-08 16:00,,,,,PT_Normal,,,,,kZ4zurldSUqydEoBtnKEdg,fa+QQs2lrkWif6ZY5ZmI+Q,,,N,0,0,,,2012-06-19 11:47,2012-06-20 10:09,admin,admin,,,
727,82985,773,10512,849,1,100,N,N,N,CP_Drtn,TT_Task,DT_FixedDUR2,RV_OK,TK_Complete,4229EIN170,T.E.R for choke valves,,,,0,0,0,0,160,0,0,0,,2011-12-27 00:00,2012-04-03 00:00,2013-01-20 16:00,2013-01-20 16:00,,2012-06-02 00:00,2012-06-02 00:00,,,2012-01-01 08:00,2012-01-29 16:00,,,,,PT_Normal,,,,,BuwAdqidHUOGpx36nVttSw,+adQvSlUzkOZha6HG7fiRA,,,N,0,0,,,2012-06-19 11:47,2012-06-20 10:09,admin,admin,,,
728,82986,773,10512,849,1,0,N,N,N,CP_Drtn,TT_Task,DT_FixedDUR2,RV_OK,TK_Active,4229EIN290,MRP for Choke valves,,1704,0,16,0,0,0,40,0,0,0,,2012-05-27 00:00,,2013-04-10 08:00,2013-04-11 16:00,,2012-06-03 08:00,2012-06-04 16:00,2012-06-03 08:00,2012-06-04 16:00,2012-06-03 08:00,2012-06-07 16:00,,2013-04-10 08:00,2013-04-11 16:00,,PT_Normal,,,,,+huKstceK0mQgFThizOluQ,uCQ7t7XtkE2pu5tmschigw,,,N,0,0,,,2012-06-19 11:47,2012-06-20 09:59,admin,admin,,,
729,82987,773,10512,849,1,100,N,N,N,CP_Drtn,TT_Task,DT_FixedDUR2,RV_OK,TK_Complete,4229EIN40,Issue MRQ for Choke valves,,,,0,0,0,0,40,0,0,0,,2011-10-10 08:48,2011-11-24 00:00,2013-01-20 16:00,2013-01-20 16:00,,2012-06-02 00:00,2012-06-02 00:00,,,2011-10-10 08:48,2011-10-17 08:48,,,,,PT_Normal,,,,,jAD7TETuZUKTHcqqSyPI8g,fa+QQs2lrkWif6ZY5ZmI+Q,,,N,0,0,,,2012-06-19 11:47,2012-06-20 10:09,admin,admin,,,
730,82988,773,10512,849,1,100,N,N,N,CP_Drtn,TT_Task,DT_FixedDUR2,RV_OK,TK_Complete,4229EIN160,T.E.R for  Pressure regulator valves,,,,0,0,0,0,120,0,0,0,,2012-02-02 00:00,2012-04-03 00:00,2013-01-13 16:00,2013-01-13 16:00,,2012-06-02 00:00,2012-06-02 00:00,,,2012-03-08 08:00,2012-03-28 16:00,,,,,PT_Normal,,,,,BVnmsxrMVEiZnib2BPRvnQ,+adQvSlUzkOZha6HG7fiRA,,,N,0,0,,,2012-06-19 11:47,2012-06-20 10:09,admin,admin,,,
731,82989,773,10512,849,1,0,N,N,N,CP_Drtn,TT_Task,DT_FixedDUR2,RV_OK,TK_Active,4229EIN320,MRP for  pressure regulator valves,,1208,0,24,0,0,0,40,0,0,0,,2012-05-27 00:00,,2013-01-14 08:00,2013-01-16 16:00,,2012-06-03 08:00,2012-06-05 16:00,2012-06-03 08:00,2012-06-05 16:00,2012-06-03 08:00,2012-06-07 16:00,,2013-01-14 08:00,2013-01-16 16:00,,PT_Normal,,,,,qC1l6BtcDE2tSMi7Oyb23g,uCQ7t7XtkE2pu5tmschigw,,,N,0,0,,,2012-06-19 11:47,2012-06-20 09:59,admin,admin,,,
732,82990,773,10512,849,1,100,N,N,N,CP_Drtn,TT_Task,DT_FixedDUR2,RV_OK,TK_Complete,4229EIN30,Issue MRQ for Pressure regulator valves,,,,0,0,0,0,24,0,0,0,,2011-10-03 08:48,2011-10-09 08:48,2013-01-13 16:00,2013-01-13 16:00,,2012-06-02 00:00,2012-06-02 00:00,,,2011-10-03 08:48,2011-10-09 08:48,,,,,PT_Normal,,,,,HdY4L09GQ0CFfWRVeq9Jtw,fa+QQs2lrkWif6ZY5ZmI+Q,,,N,0,0,,,2012-06-19 11:47,2012-06-20 10:09,admin,admin,,,
733,82991,773,10512,849,1,100,N,N,N,CP_Drtn,TT_Task,DT_FixedDUR2,RV_OK,TK_Complete,4229EIN110,T.E.R for MPFM,,,,0,0,0,0,160,0,0,0,,2011-11-14 00:00,2011-12-21 00:00,2012-12-31 08:00,2012-12-31 08:00,,2012-06-02 00:00,2012-06-02 00:00,,,2011-12-04 08:00,2011-12-29 16:00,,,,,PT_Normal,,,,,axANldgrLUWSY0CaVkaCxw,+adQvSlUzkOZha6HG7fiRA,,,N,0,0,,,2012-06-19 11:47,2012-06-20 10:09,admin,admin,,,
734,82992,773,10512,849,1,100,N,N,N,CP_Drtn,TT_Task,DT_FixedDUR2,RV_OK,TK_Complete,4229EIN260,MRP for MPFM,,,,0,0,0,0,40,0,0,0,,2012-02-09 00:00,2012-02-20 00:00,2012-12-31 08:00,2012-12-31 08:00,,2012-06-02 00:00,2012-06-02 00:00,,,2012-03-04 08:00,2012-03-08 16:00,,,,,PT_Normal,,,,,TkouOSHMIECTOC93bksxIg,uCQ7t7XtkE2pu5tmschigw,,,N,0,0,,,2012-06-19 11:47,2012-06-20 10:09,admin,admin,,,
735,82993,773,10512,849,1,100,N,N,N,CP_Drtn,TT_Task,DT_FixedDUR2,RV_OK,TK_Complete,4229EIN20,Issue MRQ for MPFM,,,,0,0,0,0,40,0,0,0,,2011-09-29 08:00,2011-10-04 00:00,2012-12-31 08:00,2012-12-31 08:00,,2012-06-02 00:00,2012-06-02 00:00,,,2011-09-29 08:00,2011-10-05 16:00,,,,,PT_Normal,,,,,JRWa5EbEXEeoNs508zNx4Q,fa+QQs2lrkWif6ZY5ZmI+Q,,,N,0,0,,,2012-06-19 11:47,2012-06-20 10:09,admin,admin,,,
736,82994,773,10514,849,1,100,N,N,N,CP_Drtn,TT_Task,DT_FixedDUR2,RV_OK,TK_Complete,4229EPL290,"18"""" spool arangement drawing -Design",,,,0,0,0,0,120,0,0,0,,2011-12-29 00:00,2012-02-13 00:00,2013-09-19 08:00,2013-09-19 08:00,,2012-06-02 00:00,2012-06-02 00:00,,,2012-01-01 08:00,2012-01-19 16:00,,,,,PT_Normal,,,,,C0hzeu3rEkWep+pd6uU6ww,,,,N,0,0,,,2012-06-19 11:47,2012-06-20 10:09,admin,admin,,,
737,82995,773,10514,849,1,100,N,N,N,CP_Drtn,TT_Task,DT_FixedDUR2,RV_OK,TK_Complete,4229EPL390,"18"""" spool arangement drawing -Construction",,,,0,0,0,0,120,0,0,0,,2012-03-18 00:00,2012-03-27 00:00,2013-09-19 08:00,2013-09-19 08:00,,2012-06-02 00:00,2012-06-02 00:00,,,2012-03-04 08:00,2012-03-22 16:00,,,,,PT_Normal,,,,,ZHEPZUMGBE22va6QeV6cyg,,,,N,0,0,,,2012-06-19 11:47,2012-06-20 10:09,admin,admin,,,
738,82996,773,10514,849,1,100,N,N,N,CP_Drtn,TT_Task,DT_FixedDUR2,RV_OK,TK_Complete,4229EPL170,"8"""" spool arrangement drawing -Approval",,,,0,0,0,0,120,0,0,0,,2011-11-23 00:00,2011-12-15 00:00,2013-09-15 08:00,2013-09-15 08:00,,2012-06-02 00:00,2012-06-02 00:00,,,2011-12-04 08:00,2011-12-22 16:00,,,,,PT_Normal,,,,,bum7gNSwo0iYhzRNoJ+qEA,jOOEz2anUU+9clXvBjEQhQ,,,N,0,0,,,2012-06-19 11:47,2012-06-20 10:09,admin,admin,,,
739,82997,773,10514,849,1,100,N,N,N,CP_Drtn,TT_Task,DT_FixedDUR2,RV_OK,TK_Complete,4229EPL310,"8"""" spool arrangement drawing -Design",,,,0,0,0,0,120,0,0,0,,2011-12-29 00:00,2012-02-13 00:00,2013-09-19 08:00,2013-09-19 08:00,,2012-06-02 00:00,2012-06-02 00:00,,,2012-01-01 08:00,2012-01-19 16:00,,,,,PT_Normal,,,,,2wmdgm9D8EaCSXJ+4R2SBA,0TGBIs4CqUS2FVJ2PYQVfA,,,N,0,0,,,2012-06-19 11:47,2012-06-20 10:09,admin,admin,,,
740,82998,773,10514,849,1,100,N,N,N,CP_Drtn,TT_Task,DT_FixedDUR2,RV_OK,TK_Complete,4229EPL410,"8"""" spool arangement drawing -Construction",,,,0,0,0,0,120,0,0,0,,2012-03-18 00:00,2012-03-27 00:00,2013-09-19 08:00,2013-09-19 08:00,,2012-06-02 00:00,2012-06-02 00:00,,,2012-03-04 08:00,2012-03-22 16:00,,,,,PT_Normal,,,,,DSHmnSWN1E2x+kpmX8OZmg,8R1bdDNv6USkyU4V9lAC9w,,,N,0,0,,,2012-06-19 11:47,2012-06-20 10:09,admin,admin,,,
741,82999,773,10514,849,1,100,N,N,N,CP_Drtn,TT_Task,DT_FixedDUR2,RV_OK,TK_Complete,4229EPL230,"8"""" riser arrangement drawing -Approval",,,,0,0,0,0,80,0,0,0,,2011-12-14 08:00,2011-12-28 00:00,2013-09-15 08:00,2013-09-15 08:00,,2012-06-02 00:00,2012-06-02 00:00,,,2011-12-14 08:00,2011-12-27 16:00,,,,,PT_Normal,,,,,82yKVUGZCkCciSwB9jOPPA,8jUDyxPYdU2TST0Gh6JkUg,,,N,0,0,,,2012-06-19 11:47,2012-06-20 10:09,admin,admin,,,
742,83000,773,10514,849,1,100,N,N,N,CP_Drtn,TT_Task,DT_FixedDUR2,RV_OK,TK_Complete,4229EPL330,"8"""" riser arrangement drawing -Design",,,,0,0,0,0,80,0,0,0,,2012-02-26 00:00,2012-02-29 00:00,2013-09-19 08:00,2013-09-19 08:00,,2012-06-02 00:00,2012-06-02 00:00,,,2012-03-13 08:00,2012-03-26 16:00,,,,,PT_Normal,,,,,EJKMv5jfJkaFeZKlrrha+g,DqhkdzQg0USL5rbPHbkl1Q,,,N,0,0,,,2012-06-19 11:47,2012-06-20 10:09,admin,admin,,,
743,83001,773,10514,849,1,100,N,N,N,CP_Drtn,TT_Task,DT_FixedDUR2,RV_OK,TK_Complete,4229EPL420,"8"""" riser arrangement drawing -Construction",,,,0,0,0,0,120,0,0,0,,2012-03-25 00:00,2012-04-19 00:00,2013-09-19 08:00,2013-09-19 08:00,,2012-06-02 00:00,2012-06-02 00:00,,,2012-04-01 08:00,2012-04-19 16:00,,,,,PT_Normal,,,,,26hyKN3LPEqiL3x/JVHdrQ,w2TMQgyxDEm1NRXaCHdGig,,,N,0,0,,,2012-06-19 11:47,2012-06-20 10:09,admin,admin,,,
744,83002,773,10514,849,1,100,N,N,N,CP_Drtn,TT_Task,DT_FixedDUR2,RV_OK,TK_Complete,4229EPL240,"18"""" riser arrangement drawing -Approval",,,,0,0,0,0,80,0,0,0,,2011-12-14 08:00,2011-12-28 00:00,2013-09-15 08:00,2013-09-15 08:00,,2012-06-02 00:00,2012-06-02 00:00,,,2011-12-14 08:00,2011-12-27 16:00,,,,,PT_Normal,,,,,QLxPhkFTKEK9zvQhNSWzvg,c9vMafYWtkK1NGoiHIJ1wA,,,N,0,0,,,2012-06-19 11:47,2012-06-20 10:09,admin,admin,,,
745,83003,773,10514,849,1,100,N,N,N,CP_Drtn,TT_Task,DT_FixedDUR2,RV_OK,TK_Complete,4229EPL350,"18"""" riser arrangement drawing -Design",,,,0,0,0,0,80,0,0,0,,2012-02-26 00:00,2012-02-29 00:00,2013-09-19 08:00,2013-09-19 08:00,,2012-06-02 00:00,2012-06-02 00:00,,,2012-03-13 08:00,2012-03-26 16:00,,,,,PT_Normal,,,,,8jaFCWp5qk20Hllxfh3K+w,ducMrzoJrUqdTOcWLFVgnw,,,N,0,0,,,2012-06-19 11:47,2012-06-20 10:09,admin,admin,,,
746,83004,773,10514,849,1,100,N,N,N,CP_Drtn,TT_Task,DT_FixedDUR2,RV_OK,TK_Complete,4229EPL430,"18"""" riser arrangement drawing -Construction",,,,0,0,0,0,120,0,0,0,,2012-03-25 00:00,2012-04-19 00:00,2013-09-19 08:00,2013-09-19 08:00,,2012-06-02 00:00,2012-06-02 00:00,,,2012-04-01 08:00,2012-04-19 16:00,,,,,PT_Normal,,,,,DLR1XYJh5k6XunHJigiYpA,VwsEWnSmS0O0TiUHBQD99w,,,N,0,0,,,2012-06-19 11:47,2012-06-20 10:09,admin,admin,,,
747,83005,773,10514,849,1,100,N,N,N,CP_Drtn,TT_Task,DT_FixedDUR2,RV_OK,TK_Complete,4229EPL440,"18""""Spool ISO-IFC",,,,0,0,0,0,0,0,0,0,,2012-05-02 00:00,2012-05-29 00:00,2013-09-19 08:00,2013-09-19 08:00,,2012-06-02 00:00,2012-06-02 00:00,,,2012-06-03 08:00,2012-06-03 08:00,,,,,PT_Normal,,,,,qVObVHX/1EqPDM3B4+j88g,,,,N,0,0,,,2012-06-19 11:47,2012-06-20 10:09,admin,admin,,,
748,83006,773,10514,849,1,100,N,N,N,CP_Drtn,TT_Task,DT_FixedDUR2,RV_OK,TK_Complete,4229EPL450,"8""""Spool ISO-IFC",,,,0,0,0,0,0,0,0,0,,2012-05-02 00:00,2012-05-29 00:00,2013-09-19 08:00,2013-09-19 08:00,,2012-06-02 00:00,2012-06-02 00:00,,,2012-06-03 08:00,2012-06-03 08:00,,,,,PT_Normal,,,,,RRkpmTdGx0KN52l4M9n9Fg,QWvo4lzWEkeSB/GI9TalYQ,,,N,0,0,,,2012-06-19 11:47,2012-06-20 10:09,admin,admin,,,
749,83007,773,10514,849,1,100,N,N,N,CP_Drtn,TT_Task,DT_FixedDUR2,RV_OK,TK_Complete,4229EPL460,"8""""Riser ISO-IFC",,,,0,0,0,0,0,0,0,0,,2012-05-02 00:00,2012-05-29 00:00,2013-09-19 08:00,2013-09-19 08:00,,2012-06-02 00:00,2012-06-02 00:00,,,2012-06-03 08:00,2012-06-03 08:00,,,,,PT_Normal,,,,,InI0BRd8Vk6TFrE0G8KoAw,,,,N,0,0,,,2012-06-19 11:47,2012-06-20 10:09,admin,admin,,,
750,83008,773,10514,849,1,100,N,N,N,CP_Drtn,TT_Task,DT_FixedDUR2,RV_OK,TK_Complete,4229EPL470,"18""""Riser ISO-IFC",,,,0,0,0,0,0,0,0,0,,2012-05-02 00:00,2012-05-29 00:00,2013-09-19 08:00,2013-09-19 08:00,,2012-06-02 00:00,2012-06-02 00:00,,,2012-06-03 08:00,2012-06-03 08:00,,,,,PT_Normal,,,,,dar80Xo1tEy6S/yOkZU3rQ,,,,N,0,0,,,2012-06-19 11:47,2012-06-20 10:09,admin,admin,,,
751,83009,773,10514,849,1,0,N,N,N,CP_Drtn,TT_Task,DT_FixedDUR2,RV_OK,TK_NotStart,4229EPL480,MTO for risers / spools,,2632,1336,48,0,0,0,48,0,0,0,,,,2013-09-19 08:00,2013-09-26 16:00,,2012-06-03 08:00,2012-06-10 16:00,2012-06-03 08:00,2012-06-10 16:00,2012-06-03 08:00,2012-06-10 16:00,,2013-09-19 08:00,2013-09-26 16:00,,PT_Normal,,,,,3G0BaMQi1kui4rR7TLyk6Q,,,,N,0,0,,,2012-06-19 11:47,2012-06-20 09:59,admin,admin,,,
752,83010,773,10514,849,1,100,N,N,N,CP_Drtn,TT_Task,DT_FixedDUR2,RV_OK,TK_Complete,4229EPL320,"18""""Spool ISO-IFD",,,,0,0,0,0,120,0,0,0,,2012-02-01 00:00,2012-02-21 00:00,2013-09-26 16:00,2013-09-26 16:00,,2012-06-02 00:00,2012-06-02 00:00,,,2012-03-04 08:00,2012-03-22 16:00,,,,,PT_Normal,,,,,IuZjKovTGE+4LVgutaTn1Q,QWvo4lzWEkeSB/GI9TalYQ,,,N,0,0,,,2012-06-19 11:47,2012-06-20 10:09,admin,admin,,,
753,83011,773,10514,849,1,100,N,N,N,CP_Drtn,TT_Task,DT_FixedDUR2,RV_OK,TK_Complete,4229EPL340,"8""""Spool ISO-IFD",,,,0,0,0,0,120,0,0,0,,2012-02-01 00:00,2012-02-21 00:00,2013-09-26 16:00,2013-09-26 16:00,,2012-06-02 00:00,2012-06-02 00:00,,,2012-03-04 08:00,2012-03-22 16:00,,,,,PT_Normal,,,,,AY3ttWQOJEuB7BziZy9rCA,+FL8Jip98kWoIme5/i161w,,,N,0,0,,,2012-06-19 11:47,2012-06-20 10:09,admin,admin,,,
754,83012,773,10514,849,1,100,N,N,N,CP_Drtn,TT_Task,DT_FixedDUR2,RV_OK,TK_Complete,4229EPL380,"8""""Riser ISO-IFD",,,,0,0,0,0,120,0,0,0,,2012-02-26 00:00,2012-03-15 00:00,2013-09-26 16:00,2013-09-26 16:00,,2012-06-02 00:00,2012-06-02 00:00,,,2012-03-05 08:00,2012-03-25 16:00,,,,,PT_Normal,,,,,FXcN7tt37EKeWGLuDgiYaQ,An0k6jaeek+tGUVppnFC2g,,,N,0,0,,,2012-06-19 11:47,2012-06-20 10:09,admin,admin,,,
755,83013,773,10514,849,1,100,N,N,N,CP_Drtn,TT_Task,DT_FixedDUR2,RV_OK,TK_Complete,4229EPL400,"18""""Riser ISO-IFD",,,,0,0,0,0,120,0,0,0,,2012-02-26 08:00,2012-03-15 00:00,2013-09-26 16:00,2013-09-26 16:00,,2012-06-02 00:00,2012-06-02 00:00,,,2012-02-26 08:00,2012-03-15 16:00,,,,,PT_Normal,,,,,bDCF55Q9A0CRB3F8yusBYg,pGWAx7T7vESmiNqcx8nO8w,,,N,0,0,,,2012-06-19 11:47,2012-06-20 10:09,admin,admin,,,
756,83014,773,10514,849,1,100,N,N,N,CP_Drtn,TT_Task,DT_FixedDUR2,RV_OK,TK_Complete,4229EPL160,"18"""" spool arrangement drawing -Approval",,,,0,0,0,0,120,0,0,0,,2011-11-15 00:00,2011-12-15 00:00,2013-09-15 08:00,2013-09-15 08:00,,2012-06-02 00:00,2012-06-02 00:00,,,2011-12-04 08:00,2011-12-22 16:00,,,,,PT_Normal,,,,,H3FuIz1y4kmBaC6EVKidYA,,,,N,0,0,,,2012-06-19 11:47,2012-06-20 10:09,admin,admin,,,
757,83015,773,10515,849,1,100,N,N,N,CP_Drtn,TT_Task,DT_FixedDUR2,RV_OK,TK_Complete,4229EPL120,Wall thickness report for risers & spools-Approval,,,,0,0,0,0,40,0,0,0,,2011-11-30 00:00,2011-12-05 16:00,2013-09-26 16:00,2013-09-26 16:00,,2012-06-02 00:00,2012-06-02 00:00,,,2011-12-11 08:00,2011-12-15 16:00,,,,,PT_Normal,,,,,FdEeIToqI0qoPjDbMa9YlA,,,,N,0,0,,,2012-06-19 11:47,2012-06-20 10:09,admin,admin,,,
758,83016,773,10515,849,1,100,N,N,N,CP_Drtn,TT_Task,DT_FixedDUR2,RV_OK,TK_Complete,4229EPL200,Wall thickness report for risers & spools-Final,,,,0,0,0,0,40,0,0,0,,2011-12-06 00:00,2011-12-19 16:00,2013-09-26 16:00,2013-09-26 16:00,,2012-06-02 00:00,2012-06-02 00:00,,,2011-12-13 08:00,2011-12-19 16:00,,,,,PT_Normal,,,,,f7iGL2VldUCHAaocOo4Xpw,,,,N,0,0,,,2012-06-19 11:47,2012-06-20 10:09,admin,admin,,,
759,83017,773,10515,849,1,0,N,N,N,CP_Drtn,TT_Task,DT_FixedDUR2,RV_OK,TK_Active,4229EPL490,Risers / spoolpieces stress analysis report-Construction,,2640,1344,40,0,0,0,80,0,0,0,,2012-04-26 00:00,,2013-09-22 08:00,2013-09-26 16:00,,2012-06-03 08:00,2012-06-07 16:00,2012-06-03 08:00,2012-06-07 16:00,2012-05-24 08:00,2012-06-06 16:00,,2013-09-22 08:00,2013-09-26 16:00,,PT_Normal,,,,,Q+kM7LAhGE2txSDCygEAIQ,,,,N,0,0,,,2012-06-19 11:47,2012-06-20 09:59,admin,admin,,,
760,83018,773,10516,849,1,100,N,N,N,CP_Drtn,TT_Task,DT_FixedDUR2,RV_OK,TK_Complete,4229EPL550,VPR for isolating joints,,,,0,0,0,0,320,0,0,0,,2012-01-09 00:00,2012-04-16 00:00,2013-09-26 16:00,2013-09-26 16:00,,2012-06-08 08:00,2012-06-08 08:00,,,2012-03-11 08:00,2012-05-03 16:00,,,,,PT_Normal,,,,,ijOd+vfpUkWa/ekLfmHz0w,,,,N,0,0,,,2012-06-19 11:47,2012-06-20 10:09,admin,admin,,,
761,83019,773,10516,849,1,100,N,N,N,CP_Drtn,TT_Task,DT_FixedDUR2,RV_OK,TK_Complete,4229EPL520,VPR for  anchor flanges,,,,0,0,0,0,320,0,0,0,,2012-02-21 00:00,2012-03-20 00:00,2013-09-26 16:00,2013-09-26 16:00,,2012-06-07 16:00,2012-06-07 16:00,,,2012-04-22 08:00,2012-06-14 16:00,,,,,PT_Normal,,,,,7abNreD5QEOnRJtWVxvFjA,,,,N,0,0,,,2012-06-19 11:47,2012-06-20 10:09,admin,admin,,,
762,83020,773,10516,849,1,0,N,N,N,CP_Drtn,TT_Task,DT_FixedDUR2,RV_OK,TK_Active,4229EPL510,VPR for flanges,,2320,1176,360,0,0,0,320,0,0,0,,2012-03-11 00:00,,2013-07-28 08:00,2013-09-26 16:00,,2012-06-03 08:00,2012-08-02 16:00,2012-06-03 08:00,2012-08-02 16:00,2012-03-29 08:00,2012-05-23 16:00,,2013-07-28 08:00,2013-09-26 16:00,,PT_Normal,,,,,JecaJn9en06W+DaqKrzolQ,,,,N,0,0,,,2012-06-19 11:47,2012-06-20 09:59,admin,admin,,,
763,83021,773,10516,849,1,100,N,N,N,CP_Drtn,TT_Task,DT_FixedDUR2,RV_OK,TK_Complete,4229EPL530,VPR for heat shrink sleeves,,,,0,0,0,0,320,0,0,0,,2012-02-19 00:00,2012-02-29 00:00,2013-09-26 16:00,2013-09-26 16:00,,2012-06-02 00:00,2012-06-02 00:00,,,2012-03-04 08:00,2012-04-26 16:00,,,,,PT_Normal,,,,,4n35tlLk/EGxU5bKQNYCPA,,,,N,0,0,,,2012-06-19 11:47,2012-06-20 10:09,admin,admin,,,
764,83022,773,10516,849,1,100,N,N,N,CP_Drtn,TT_Task,DT_FixedDUR2,RV_OK,TK_Complete,4229EPL540,VPR for  kamos ring,,,,0,0,0,0,320,0,0,0,,2012-02-01 00:00,2012-03-01 00:00,2013-09-26 16:00,2013-09-26 16:00,,2012-06-02 00:00,2012-06-02 00:00,,,2012-03-04 08:00,2012-04-26 16:00,,,,,PT_Normal,,,,,9MJuUzwHkUS1AznJpKb2vg,,,,N,0,0,,,2012-06-19 11:47,2012-06-20 10:09,admin,admin,,,
765,83023,773,10516,849,1,100,N,N,N,CP_Drtn,TT_Task,DT_FixedDUR2,RV_OK,TK_Complete,4229EPL70,"T.E.R for 8""""line pipe",,,,0,0,0,0,160,0,0,0,,2011-11-22 00:00,2012-01-08 16:00,2013-07-22 08:00,2013-07-22 08:00,,2012-06-02 00:00,2012-06-02 00:00,,,2012-01-22 08:00,2012-02-19 16:00,,,,,PT_Normal,,,,,whon66vP4E6+KGzu62nOxg,,,,N,0,0,,,2012-06-19 11:47,2012-06-20 10:09,admin,admin,,,
766,83024,773,10516,849,1,100,N,N,N,CP_Drtn,TT_Task,DT_FixedDUR2,RV_OK,TK_Complete,4229EPL90,T.E.R for hot bends,,,,0,0,0,0,160,0,0,0,,2011-10-30 00:00,2011-12-08 00:00,2013-06-04 08:00,2013-06-04 08:00,,2012-06-02 00:00,2012-06-02 00:00,,,2011-12-04 08:00,2011-12-29 16:00,,,,,PT_Normal,,,,,lyTJBGBlKU27wp3Boyn8EQ,,,,N,0,0,,,2012-06-19 11:47,2012-06-20 10:09,admin,admin,,,
767,83025,773,10516,849,1,100,N,N,N,CP_Drtn,TT_Task,DT_FixedDUR2,RV_OK,TK_Complete,4229EPL100,T.E.R for flanges,,,,0,0,0,0,160,0,0,0,,2011-12-01 00:00,2012-01-18 16:00,2013-07-28 08:00,2013-07-28 08:00,,2012-06-02 00:00,2012-06-02 00:00,,,2011-12-05 08:00,2012-01-01 16:00,,,,,PT_Normal,,,,,gxiWj0YAmESf01828jOHUg,,,,N,0,0,,,2012-06-19 11:47,2012-06-20 10:09,admin,admin,,,
768,83026,773,10516,849,1,100,N,N,N,CP_Drtn,TT_Task,DT_FixedDUR2,RV_OK,TK_Complete,4229EPL130,T.E.R for heat shrink sleeves,,,,0,0,0,0,120,0,0,0,,2011-11-03 00:00,2011-12-05 00:00,2013-09-26 16:00,2013-09-26 16:00,,2012-06-02 00:00,2012-06-02 00:00,,,2011-12-04 08:00,2011-12-22 16:00,,,,,PT_Normal,,,,,ZvTEfaG2CkGR0KM2jOj5Pw,,,,N,0,0,,,2012-06-19 11:47,2012-06-20 10:09,admin,admin,,,
769,83027,773,10516,849,1,100,N,N,N,CP_Drtn,TT_Task,DT_FixedDUR2,RV_OK,TK_Complete,4229EPL140,T.E.R for kamos ring,,,,0,0,0,0,120,0,0,0,,2011-11-13 00:00,2011-11-20 00:00,2013-09-26 16:00,2013-09-26 16:00,,2012-06-02 00:00,2012-06-02 00:00,,,2011-12-04 08:00,2011-12-22 16:00,,,,,PT_Normal,,,,,Zk1W4yiTQkqwMINQTAwCyw,,,,N,0,0,,,2012-06-19 11:47,2012-06-20 10:09,admin,admin,,,
770,83028,773,10516,849,1,100,N,N,N,CP_Drtn,TT_Task,DT_FixedDUR2,RV_OK,TK_Complete,4229EPL210,T.E.R for isolating joints,,,,0,0,0,0,120,0,0,0,,2011-11-13 00:00,2011-12-08 00:00,2013-08-21 08:00,2013-08-21 08:00,,2012-06-02 00:00,2012-06-02 00:00,,,2011-12-04 08:00,2011-12-22 16:00,,,,,PT_Normal,,,,,cUpEveuiwE+cUXiBwh9mqw,,,,N,0,0,,,2012-06-19 11:47,2012-06-20 10:09,admin,admin,,,
771,83029,773,10516,849,1,100,N,N,N,CP_Drtn,TT_Task,DT_FixedDUR2,RV_OK,TK_Complete,4229EPL150,T.E.R for anchor flanges,,,,0,0,0,0,120,0,0,0,,2011-12-06 08:00,2012-01-05 00:00,2013-08-21 08:00,2013-08-21 08:00,,2012-06-02 00:00,2012-06-02 00:00,,,2011-12-06 08:00,2011-12-26 16:00,,,,,PT_Normal,,,,,83Rl9PWi9028aK6cSSZFfQ,,,,N,0,0,,,2012-06-19 11:47,2012-06-20 10:09,admin,admin,,,
772,83030,773,10516,849,1,100,N,N,N,CP_Drtn,TT_Task,DT_FixedDUR2,RV_OK,TK_Complete,4229EPL10,Pipeline specifications & data sheets,,,,0,0,0,0,168,0,0,0,,2011-08-15 08:00,2011-09-14 16:00,2013-06-04 08:00,2013-06-04 08:00,,2012-06-02 00:00,2012-06-02 00:00,,,2011-08-15 08:00,2011-09-14 16:00,,,,,PT_Normal,,,,,zmHfWc0HU0itSEnMz+knVQ,vfWL9w00SHKHeaxQNrnnog,,,N,0,0,,,2012-06-19 11:47,2012-06-20 10:09,admin,admin,,,
773,83031,773,10516,849,1,100,N,N,N,CP_Drtn,TT_Task,DT_FixedDUR2,RV_OK,TK_Complete,4229EPL40,MRQ for heat shrink sleeves,,,,0,0,0,0,80,0,0,0,,2011-09-27 08:00,2011-10-11 16:00,2013-08-21 08:00,2013-08-21 08:00,,2012-06-02 00:00,2012-06-02 00:00,,,2011-09-27 08:00,2011-10-11 16:00,,,,,PT_Normal,,,,,NLVO8SxPaUeVNzS4YqWZtw,,,,N,0,0,,,2012-06-19 11:47,2012-06-20 10:09,admin,admin,,,
774,83032,773,10516,849,1,100,N,N,N,CP_Drtn,TT_Task,DT_FixedDUR2,RV_OK,TK_Complete,4229EPL560,"MRQ for 8"""" line pipe",,,,0,0,0,0,80,0,0,0,,2011-10-09 08:00,2011-10-23 00:00,2013-07-22 08:00,2013-07-22 08:00,,2012-06-02 00:00,2012-06-02 00:00,,,2011-10-09 08:00,2011-10-20 16:00,,,,,PT_Normal,,,,,tVLgqsneMkm8aPAuxWwzAw,,,,N,0,0,,,2012-06-19 11:47,2012-06-20 10:09,admin,admin,,,
775,83033,773,10516,849,1,0,N,N,N,CP_Drtn,TT_Task,DT_FixedDUR2,RV_OK,TK_Active,4229EPL570,"VPR for  8""""line pipe",,2560,2560,80,0,0,0,320,0,0,0,,2012-04-05 00:00,,2013-09-15 08:00,2013-09-26 16:00,,2012-06-10 08:00,2012-06-21 16:00,2012-06-10 08:00,2012-06-21 16:00,2012-05-06 08:00,2012-06-28 16:00,,2013-09-15 08:00,2013-09-26 16:00,,PT_Normal,,,,,2P3HjxOPzUOm+Hd5Hq6ybw,,,,N,0,0,,,2012-06-19 11:47,2012-06-20 09:59,admin,admin,,,
776,83034,773,10516,849,1,100,N,N,N,CP_Drtn,TT_Task,DT_FixedDUR2,RV_OK,TK_Complete,4229EPL20,MRQ for hot bends,,,,0,0,0,0,120,0,0,0,,2011-09-15 08:00,2011-10-02 00:00,2013-06-04 08:00,2013-06-04 08:00,,2012-06-02 00:00,2012-06-02 00:00,,,2011-09-15 08:00,2011-10-05 16:00,,,,,PT_Normal,,,,,OMCJNxmIUkGTTgExH94MRA,,,,N,0,0,,,2012-06-19 11:47,2012-06-20 10:09,admin,admin,,,
777,83035,773,10516,849,1,100,N,N,N,CP_Drtn,TT_Task,DT_FixedDUR2,RV_OK,TK_Complete,4229EPL260,MRP for heat shrink sleeves,,,,0,0,0,0,40,0,0,0,,2012-01-24 08:00,2012-02-02 00:00,2013-09-26 16:00,2013-09-26 16:00,,2012-06-02 00:00,2012-06-02 00:00,,,2012-01-24 08:00,2012-01-31 16:00,,,,,PT_Normal,,,,,XsFhj6FxwUiQU0oT59LO2g,,,,N,0,0,,,2012-06-19 11:47,2012-06-20 10:09,admin,admin,,,
778,83036,773,10516,849,1,100,N,N,N,CP_Drtn,TT_Task,DT_FixedDUR2,RV_OK,TK_Complete,4229EPL270,MRP for kamos ring,,,,0,0,0,0,40,0,0,0,,2011-12-21 00:00,2011-12-26 00:00,2013-09-26 16:00,2013-09-26 16:00,,2012-06-02 00:00,2012-06-02 00:00,,,2012-01-08 08:00,2012-01-12 16:00,,,,,PT_Normal,,,,,w+/1Bsef/kKQuAVRlVqvZw,,,,N,0,0,,,2012-06-19 11:47,2012-06-20 10:09,admin,admin,,,
779,83037,773,10516,849,1,100,N,N,N,CP_Drtn,TT_Task,DT_FixedDUR2,RV_OK,TK_Complete,4229EPL300,MRP for isolating joints,,,,0,0,0,0,8,0,0,0,,2012-01-24 00:00,2012-01-31 00:00,2013-08-21 08:00,2013-08-21 08:00,,2012-06-02 00:00,2012-06-02 00:00,,,2012-01-29 08:00,2012-01-29 16:00,,,,,PT_Normal,,,,,asfxT7uy002CjlAMSAcBfw,,,,N,0,0,,,2012-06-19 11:47,2012-06-20 10:09,admin,admin,,,
780,83038,773,10516,849,1,100,N,N,N,CP_Drtn,TT_Task,DT_FixedDUR2,RV_OK,TK_Complete,4229EPL190,MRP for hot bends,,,,0,0,0,0,40,0,0,0,,2012-02-09 00:00,2012-02-19 00:00,2013-06-04 08:00,2013-06-04 08:00,,2012-06-02 00:00,2012-06-02 00:00,,,2012-01-29 08:00,2012-02-02 16:00,,,,,PT_Normal,,,,,9gHxyXmXVEqAU/dNt3n12g,,,,N,0,0,,,2012-06-19 11:47,2012-06-20 10:09,admin,admin,,,
781,83039,773,10516,849,1,100,N,N,N,CP_Drtn,TT_Task,DT_FixedDUR2,RV_OK,TK_Complete,4229EPL220,MRP for flanges,,,,0,0,0,0,40,0,0,0,,2012-02-26 00:00,2012-02-28 00:00,2013-07-28 08:00,2013-07-28 08:00,,2012-06-02 00:00,2012-06-02 00:00,,,2012-03-07 08:00,2012-03-13 16:00,,,,,PT_Normal,,,,,4DPwUxG1y0yt5Szxo8m9AA,,,,N,0,0,,,2012-06-19 11:47,2012-06-20 10:09,admin,admin,,,
782,83040,773,10516,849,1,100,N,N,N,CP_Drtn,TT_Task,DT_FixedDUR2,RV_OK,TK_Complete,4229EPL280,MRP for anchor flanges,,,,0,0,0,0,40,0,0,0,,2012-02-14 00:00,2012-02-28 00:00,2013-08-21 08:00,2013-08-21 08:00,,2012-06-02 00:00,2012-06-02 00:00,,,2012-03-04 08:00,2012-03-08 16:00,,,,,PT_Normal,,,,,lIkG+rPvPECqD/1nDpmvwQ,,,,N,0,0,,,2012-06-19 11:47,2012-06-20 10:09,admin,admin,,,
783,83041,773,10516,849,1,100,N,N,N,CP_Drtn,TT_Task,DT_FixedDUR2,RV_OK,TK_Complete,4229EPL60,MRQ for Kamos ring,,,,0,0,0,0,80,0,0,0,,2011-09-22 08:00,2011-10-02 00:00,2013-08-21 08:00,2013-08-21 08:00,,2012-06-02 00:00,2012-06-02 00:00,,,2011-09-22 08:00,2011-10-05 16:00,,,,,PT_Normal,,,,,7+XW6QS5VEmk5plfPt799w,,,,N,0,0,,,2012-06-19 11:47,2012-06-20 10:09,admin,admin,,,
784,83042,773,10516,849,1,100,N,N,N,CP_Drtn,TT_Task,DT_FixedDUR2,RV_OK,TK_Complete,4229EPL80,MRQ for isolating joints,,,,0,0,0,0,80,0,0,0,,2011-10-04 08:00,2011-10-19 00:00,2013-08-21 08:00,2013-08-21 08:00,,2012-06-02 00:00,2012-06-02 00:00,,,2011-10-04 08:00,2011-10-18 16:00,,,,,PT_Normal,,,,,QzRzPjzCX0qagAsLVWrP4w,Iy03cOKrXESwGRujrHG5XQ,,,N,0,0,,,2012-06-19 11:47,2012-06-20 10:09,admin,admin,,,
785,83043,773,10516,849,1,100,N,N,N,CP_Drtn,TT_Task,DT_FixedDUR2,RV_OK,TK_Complete,4229EPL50,MRQ for anchor flanges,,,,0,0,0,0,64,0,0,0,,2011-10-16 08:00,2011-10-25 16:00,2013-07-22 08:00,2013-07-22 08:00,,2012-06-02 00:00,2012-06-02 00:00,,,2011-10-16 08:00,2011-10-25 16:00,,,,,PT_Normal,,,,,tCAuIDE0x0uysvX19snNgQ,,,,N,0,0,,,2012-06-19 11:47,2012-06-20 10:09,admin,admin,,,
786,83044,773,10516,849,1,100,N,N,N,CP_Drtn,TT_Task,DT_FixedDUR2,RV_OK,TK_Complete,4229EPL30,MRQ for flanges,,,,0,0,0,0,40,0,0,0,,2011-10-09 08:00,2011-10-13 16:00,2013-07-22 08:00,2013-07-22 08:00,,2012-06-02 00:00,2012-06-02 00:00,,,2011-10-09 08:00,2011-10-13 16:00,,,,,PT_Normal,,,,,nuEIfSgp7E2w2undmfGkoQ,,,,N,0,0,,,2012-06-19 11:47,2012-06-20 10:09,admin,admin,,,
787,83045,773,10516,849,1,100,N,N,N,CP_Drtn,TT_Task,DT_FixedDUR2,RV_OK,TK_Complete,4229EPL110,"MRP for 8"""" pipeline",,,,0,0,0,0,40,0,0,0,,2012-02-21 00:00,2012-02-26 00:00,2013-07-22 08:00,2013-07-22 08:00,,2012-06-02 00:00,2012-06-02 00:00,,,2012-03-04 08:00,2012-03-08 16:00,,,,,PT_Normal,,,,,VpW1C/fbOU21r4I2BXZ72g,,,,N,0,0,,,2012-06-19 11:47,2012-06-20 10:09,admin,admin,,,
788,83046,773,10516,849,1,100,N,N,N,CP_Drtn,TT_Task,DT_FixedDUR2,RV_OK,TK_Complete,4229EPL250,Testing & pre-commissioning specification-Approval,,,,0,0,0,0,80,0,0,0,,2011-12-14 08:00,2012-01-02 16:00,2013-09-22 08:00,2013-09-22 08:00,,2012-06-02 00:00,2012-06-02 00:00,,,2011-12-14 08:00,2011-12-27 16:00,,,,,PT_Normal,,,,,wtglcX8sw0OmFjCFoCNm6A,,,,N,0,0,,,2012-06-19 11:47,2012-06-20 10:09,admin,admin,,,
789,83047,773,10516,849,1,0,N,N,N,CP_Drtn,TT_Task,DT_FixedDUR2,RV_OK,TK_NotStart,4229EPL360,Testing & pre-commissioning specification-Final,,2120,824,40,0,0,0,40,0,0,0,,,,2013-09-22 08:00,2013-09-26 16:00,,2012-09-09 08:00,2012-09-13 16:00,2012-09-09 08:00,2012-09-13 16:00,2012-09-09 08:00,2012-09-13 16:00,,2013-09-22 08:00,2013-09-26 16:00,,PT_Normal,,,,,SEup90sDsEq4FWm5HbLSrg,,,,N,0,0,,,2012-06-19 11:47,2012-06-20 09:59,admin,admin,,,
790,83048,773,10516,849,1,100,N,N,N,CP_Drtn,TT_Task,DT_FixedDUR2,RV_OK,TK_Complete,4229EPL180,Welding  & NDT specification-Design,,,,0,0,0,0,80,0,0,0,,2011-12-01 00:00,2011-12-21 00:00,2013-09-26 16:00,2013-09-26 16:00,,2012-06-02 00:00,2012-06-02 00:00,,,2011-12-04 08:00,2011-12-15 16:00,,,,,PT_Normal,,,,,SlsNgqbEc0ig9pAEf0VHrA,SduIFwWkCkaQdv/5HupADw,,,N,0,0,,,2012-06-19 11:47,2012-06-20 10:09,admin,admin,,,
791,83049,773,10516,849,1,100,N,N,N,CP_Drtn,TT_Task,DT_FixedDUR2,RV_OK,TK_Complete,4229EPL370,Welding  & NDT specification-Final,,,,0,0,0,0,40,0,0,0,,2012-01-01 00:00,2012-03-08 00:00,2013-09-26 16:00,2013-09-26 16:00,,2012-06-02 00:00,2012-06-02 00:00,,,2012-07-19 08:00,2012-07-25 16:00,,,,,PT_Normal,,,,,4eTXF+PkjU+0r33pSu13Rg,FggATIGo6UWUldhCHJdfyQ,,,N,0,0,,,2012-06-19 11:47,2012-06-20 10:09,admin,admin,,,
792,83050,773,10516,849,1,0,N,N,N,CP_Drtn,TT_Task,DT_FixedDUR2,RV_OK,TK_Active,4229EPL500,VPR for hot bends,,2320,1176,320,0,0,0,320,0,0,0,,2012-04-18 00:00,,2013-08-04 08:00,2013-09-26 16:00,,2012-06-10 08:00,2012-08-02 16:00,2012-06-10 08:00,2012-08-02 16:00,2012-04-08 08:00,2012-05-31 16:00,,2013-08-04 08:00,2013-09-26 16:00,,PT_Normal,,,,,djhMH3pJfEyXgbv608QE0A,,,,N,0,0,,,2012-06-19 11:47,2012-06-20 09:59,admin,admin,,,
793,83051,773,10520,849,1,100,N,N,N,CP_Drtn,TT_Task,DT_FixedDUR2,RV_OK,TK_Complete,4229EPV70,V.P.R for Small Tanks (cancelled),,,,0,0,0,0,400,0,0,0,,2012-03-03 00:00,2012-03-03 00:00,2013-09-26 16:00,2013-09-26 16:00,,2012-06-02 00:00,2012-06-02 00:00,,,2012-04-29 08:00,2012-07-05 16:00,,,,,PT_Normal,,,,,8uis12HTaEGa774oh0OjTA,,,,N,0,0,,,2012-06-19 11:47,2012-06-20 10:09,admin,admin,,,
794,83052,773,10520,849,1,0,N,N,N,CP_Drtn,TT_Task,DT_FixedDUR2,RV_OK,TK_Active,4229EPV80,V.P.R for Pressure Vesseles,,2320,1176,320,0,0,0,320,0,0,0,,2012-04-09 00:00,,2013-08-04 08:00,2013-09-26 16:00,,2012-06-10 08:00,2012-08-02 16:00,2012-06-10 08:00,2012-08-02 16:00,2012-05-06 08:00,2012-06-28 16:00,,2013-08-04 08:00,2013-09-26 16:00,,PT_Normal,,,,,oK2YNziybUOC+eHDtocoNA,,,,N,0,0,,,2012-06-19 11:47,2012-06-20 09:59,admin,admin,,,
795,83053,773,10520,849,1,100,N,N,N,CP_Drtn,TT_Task,DT_FixedDUR2,RV_OK,TK_Complete,4229EPV30,T.E.R for  Small Tanks,,,,0,0,0,0,160,0,0,0,,2011-11-24 00:00,2011-12-29 00:00,2012-12-31 08:00,2012-12-31 08:00,,2012-06-02 00:00,2012-06-02 00:00,,,2011-12-04 08:00,2011-12-29 16:00,,,,,PT_Normal,,,,,EcvsuMqy+Eq8X+F2+idHvw,+adQvSlUzkOZha6HG7fiRA,,,N,0,0,,,2012-06-19 11:47,2012-06-20 10:09,admin,admin,,,
796,83054,773,10520,849,1,100,N,N,N,CP_Drtn,TT_Task,DT_FixedDUR2,RV_OK,TK_Complete,4229EPV50,MRP for Small Tanks (cancelled),,,,0,0,0,0,40,0,0,0,,2012-03-03 00:00,2012-03-03 00:00,2012-12-31 08:00,2012-12-31 08:00,,2012-06-02 00:00,2012-06-02 00:00,,,2012-03-18 08:00,2012-03-22 16:00,,,,,PT_Normal,,,,,7TeUQCPDNU2ayMHKo9Ibog,uCQ7t7XtkE2pu5tmschigw,,,N,0,0,,,2012-06-19 11:47,2012-06-20 10:09,admin,admin,,,
797,83055,773,10520,849,1,100,N,N,N,CP_Drtn,TT_Task,DT_FixedDUR2,RV_OK,TK_Complete,4229EPV10,Issue MRQ for Small Tanks,,,,0,0,0,0,40,0,0,0,,2011-09-25 00:00,2011-10-24 00:00,2013-09-26 16:00,2013-09-26 16:00,,2012-06-02 00:00,2012-06-02 00:00,,,2011-10-27 08:00,2011-11-02 16:00,,,,,PT_Normal,,,,,q4kdKkWAbU2WEp0b6xvLdA,fa+QQs2lrkWif6ZY5ZmI+Q,,,N,0,0,,,2012-06-19 11:47,2012-06-20 10:09,admin,admin,,,
798,83056,773,10520,849,1,100,N,N,N,CP_Drtn,TT_Task,DT_FixedDUR2,RV_OK,TK_Complete,4229EPV40,T.E.R for Pressure Vessels,,,,0,0,0,0,160,0,0,0,,2011-12-15 00:00,2012-02-20 00:00,2013-01-14 08:00,2013-01-14 08:00,,2012-06-02 00:00,2012-06-02 00:00,,,2011-12-11 08:00,2012-01-05 16:00,,,,,PT_Normal,,,,,owSqVXjU2ki8Mr72tnbSFw,+adQvSlUzkOZha6HG7fiRA,,,N,0,0,,,2012-06-19 11:47,2012-06-20 10:09,admin,admin,,,
799,83057,773,10520,849,1,100,N,N,N,CP_Drtn,TT_Task,DT_FixedDUR2,RV_OK,TK_Complete,4229EPV60,MRP for  Pressure Vessels,,,,0,0,0,0,40,0,0,0,,2012-03-25 08:00,2012-03-25 16:00,2013-01-14 08:00,2013-01-14 08:00,,2012-06-02 00:00,2012-06-02 00:00,,,2012-03-25 08:00,2012-03-29 16:00,,,,,PT_Normal,,,,,TbrEh6HULUSbI6UCrSr6MQ,uCQ7t7XtkE2pu5tmschigw,,,N,0,0,,,2012-06-19 11:47,2012-06-20 10:09,admin,admin,,,
800,83058,773,10520,849,1,100,N,N,N,CP_Drtn,TT_Task,DT_FixedDUR2,RV_OK,TK_Complete,4229EPV20,Issue MRQ for Pressure vesseles,,,,0,0,0,0,40,0,0,0,,2011-09-25 00:00,2011-11-17 00:00,2013-01-14 08:00,2013-01-14 08:00,,2012-06-02 00:00,2012-06-02 00:00,,,2011-11-01 08:00,2011-11-14 16:00,,,,,PT_Normal,,,,,yK+m730lBUSzUCMGiw0UIA,fa+QQs2lrkWif6ZY5ZmI+Q,,,N,0,0,,,2012-06-19 11:47,2012-06-20 10:09,admin,admin,,,
801,83059,773,10522,849,1,100,N,N,N,CP_Drtn,TT_Task,DT_FixedDUR2,RV_OK,TK_Complete,4229ETE20,Final Telecommunication Philosophy,,,,0,0,0,0,64,0,0,0,,2011-11-28 00:00,2011-12-04 00:00,2013-09-26 16:00,2013-09-26 16:00,,2012-06-02 00:00,2012-06-02 00:00,,,2011-12-04 08:00,2011-12-13 16:00,,,,,PT_Normal,,,,,r9H3n1s0w0CBQ0gAdcDPdw,,,,N,0,0,,,2012-06-19 11:47,2012-06-20 10:09,admin,admin,,,
802,83060,773,10522,849,1,100,N,N,N,CP_Drtn,TT_Task,DT_FixedDUR2,RV_OK,TK_Complete,4229ETE10,Telecommunication Philosophy IFA,,,,0,0,0,0,80,0,0,0,,2011-10-13 08:00,2011-10-26 16:00,2013-09-26 16:00,2013-09-26 16:00,,2012-06-02 00:00,2012-06-02 00:00,,,2011-10-13 08:00,2011-10-26 16:00,,,,,PT_Normal,,,,,mRcxO8Rnp0iuN/luA1XcUg,,,,N,0,0,,,2012-06-19 11:47,2012-06-20 10:09,admin,admin,,,
803,83061,773,10523,849,1,100,N,N,N,CP_Drtn,TT_Task,DT_FixedDUR2,RV_OK,TK_Complete,4229ETE30,Point To Point VHF Radio System specification,,,,0,0,0,0,72,0,0,0,,2011-10-17 00:00,2011-11-17 00:00,2013-09-26 16:00,2013-09-26 16:00,,2012-06-02 00:00,2012-06-02 00:00,,,2011-12-21 08:00,2012-01-02 16:00,,,,,PT_Normal,,,,,WuM3+tfcNkqphqbJCNby/Q,,,,N,0,0,,,2012-06-19 11:47,2012-06-20 10:09,admin,admin,,,
804,83062,773,10523,849,1,100,N,N,N,CP_Drtn,TT_Task,DT_FixedDUR2,RV_OK,TK_Complete,4229ETE40,Radar system specification IFA,,,,0,0,0,0,160,0,0,0,,2011-10-17 08:00,2011-11-17 00:00,2012-06-04 08:00,2012-06-04 08:00,,2012-06-02 00:00,2012-06-02 00:00,,,2011-10-17 08:00,2011-11-20 16:00,,,,,PT_Normal,,,,,mL7DzhpUm0OG1jbIo49txw,,,,N,0,0,,,2012-06-19 11:47,2012-06-20 10:09,admin,admin,,,
805,83063,773,10523,849,1,100,N,N,N,CP_Drtn,TT_Task,DT_FixedDUR2,RV_OK,TK_Complete,4229ETE50,Radar system specification IFD,,,,0,0,0,0,80,0,0,0,,2011-11-21 00:00,2011-11-30 00:00,2013-09-26 16:00,2013-09-26 16:00,,2012-06-02 00:00,2012-06-02 00:00,,,2011-12-04 08:00,2011-12-15 16:00,,,,,PT_Normal,,,,,MxzMPFohfkyhummxsBcNNw,,,,N,0,0,,,2012-06-19 11:47,2012-06-20 10:09,admin,admin,,,
806,83064,773,10523,849,1,0,N,N,N,CP_Drtn,TT_Task,DT_FixedDUR2,RV_OK,TK_NotStart,4229ETE60,Radar system specification IFP,,2136,2136,40,0,0,0,40,0,0,0,,,,2013-09-22 08:00,2013-09-26 16:00,,2012-09-05 08:00,2012-09-11 16:00,2012-09-05 08:00,2012-09-11 16:00,2012-09-05 08:00,2012-09-11 16:00,,2013-09-22 08:00,2013-09-26 16:00,,PT_Normal,,,,,+jyniuV/5UGFU7/dTQXiiw,,,,N,0,0,,,2012-06-19 11:47,2012-06-20 09:59,admin,admin,,,
807,83065,773,10523,849,1,100,N,N,N,CP_Drtn,TT_Task,DT_FixedDUR2,RV_OK,TK_Complete,4229ETE70,MRQ for Radar System IFA,,,,0,0,0,0,64,0,0,0,,2011-11-21 00:00,2011-11-30 00:00,2012-06-04 08:00,2012-06-04 08:00,,2012-06-02 00:00,2012-06-02 00:00,,,2011-12-11 08:00,2011-12-20 16:00,,,,,PT_Normal,,,,,XUHhSjxyj0GMKAHxQb/sKA,,,,N,0,0,,,2012-06-19 11:47,2012-06-20 10:09,admin,admin,,,
808,83066,773,10523,849,1,100,N,N,N,CP_Drtn,TT_Task,DT_FixedDUR2,RV_OK,TK_Complete,4229ETE80,MRQ for Radar System IFI,,,,0,0,0,0,32,0,0,0,,2011-11-21 00:00,2011-11-30 00:00,2012-06-04 08:00,2012-06-04 08:00,,2012-06-02 00:00,2012-06-02 00:00,,,2011-12-27 08:00,2012-01-01 16:00,,,,,PT_Normal,,,,,WrYyxQS8CUelVGVHHcu/YA,,,,N,0,0,,,2012-06-19 11:47,2012-06-20 10:09,admin,admin,,,
809,83067,773,10523,849,1,0,N,N,N,CP_Drtn,TT_Task,DT_FixedDUR2,RV_OK,TK_NotStart,4229ETE90,MRP for Radar System,,1392,0,40,0,0,0,40,0,0,0,,,,2013-05-14 08:00,2013-05-20 16:00,,2012-09-05 08:00,2012-09-11 16:00,2012-09-05 08:00,2012-09-11 16:00,2012-09-05 08:00,2012-09-11 16:00,,2013-05-14 08:00,2013-05-20 16:00,,PT_Normal,,,,,wiSkrE77eUe84KDXG20wCw,,,,N,0,0,,,2012-06-19 11:47,2012-06-20 09:59,admin,admin,,,
810,83068,773,10523,849,1,0,N,N,N,CP_Drtn,TT_Task,DT_FixedDUR2,RV_OK,TK_NotStart,4229ETE160,V.P.R  for Radar System,,1520,224,400,0,0,0,400,0,0,0,,,,2013-07-21 08:00,2013-09-26 16:00,,2012-10-28 08:00,2013-01-03 16:00,2012-10-28 08:00,2013-01-03 16:00,2012-10-28 08:00,2013-01-03 16:00,,2013-07-21 08:00,2013-09-26 16:00,,PT_Normal,,,,,iAanm6E2okK+2pVBgXviSw,,,,N,0,0,,,2012-06-19 11:47,2012-06-20 09:59,admin,admin,,,
811,83069,773,10523,849,1,0,N,N,N,CP_Drtn,TT_Task,DT_FixedDUR2,RV_OK,TK_NotStart,4229ETE170,T.E.R for Radar System,,0,0,184,0,0,0,184,0,0,0,2012-07-03 08:00,,,2012-07-03 08:00,2012-08-02 16:00,,2012-07-03 08:00,2012-08-02 16:00,2012-07-03 08:00,2012-08-02 16:00,2012-07-03 08:00,2012-08-02 16:00,,2012-07-03 08:00,2012-08-02 16:00,CS_MSO,PT_Normal,,,,,2HAK4OZm2E+o4u5Jvghs5w,,,,N,0,0,,,2012-06-19 11:47,2012-06-19 11:47,admin,admin,,,
812,83070,773,10524,849,1,100,N,N,N,CP_Drtn,TT_Task,DT_FixedDUR2,RV_OK,TK_Complete,4229ETE100,Telecommunication equipment layout IFA,,,,0,0,0,0,96,0,0,0,,2011-12-05 00:00,2011-12-08 00:00,2013-09-26 16:00,2013-09-26 16:00,,2012-06-02 00:00,2012-06-02 00:00,,,2011-12-04 08:00,2011-12-19 16:00,,,,,PT_Normal,,,,,HBtb5Q3K5UmtX/nwXisN7A,,,,N,0,0,,,2012-06-19 11:47,2012-06-20 10:09,admin,admin,,,
813,83071,773,10524,849,1,0,N,N,N,CP_Drtn,TT_Task,DT_FixedDUR2,RV_OK,TK_NotStart,4229ETE110,Telecommunication equipment layout IFD (Expected to be cancelled),,2536,216,24,0,0,0,24,0,0,0,,,,2013-09-03 08:00,2013-09-05 16:00,,2012-06-03 08:00,2012-06-05 16:00,2012-06-03 08:00,2012-06-05 16:00,2012-06-03 08:00,2012-06-05 16:00,,2013-09-03 08:00,2013-09-05 16:00,,PT_Normal,,,,,9rKMxv2h0UWap5Rc2HFEyg,,,,N,0,0,,,2012-06-19 11:47,2012-06-20 09:59,admin,admin,,,
814,83072,773,10524,849,1,0,N,N,N,CP_Drtn,TT_Task,DT_FixedDUR2,RV_OK,TK_NotStart,4229ETE120,Telecommunication equipment layout IFC (Expected to be cancelled),,2320,2320,80,0,0,0,80,0,0,0,,,,2013-09-15 08:00,2013-09-26 16:00,,2012-07-22 08:00,2012-08-02 16:00,2012-07-22 08:00,2012-08-02 16:00,2012-07-22 08:00,2012-08-02 16:00,,2013-09-15 08:00,2013-09-26 16:00,,PT_Normal,,,,,Zzuv/NVqkUWhncbQAzo8nw,,,,N,0,0,,,2012-06-19 11:47,2012-06-20 09:59,admin,admin,,,
815,83073,773,10524,849,1,100,N,N,N,CP_Drtn,TT_Task,DT_FixedDUR2,RV_OK,TK_Complete,4229ETE130,Telecommunication cable routing IFA,,,,0,0,0,0,80,0,0,0,,2011-12-05 00:00,2012-01-19 16:00,2013-09-26 16:00,2013-09-26 16:00,,2012-06-02 00:00,2012-06-02 00:00,,,2012-01-01 08:00,2012-01-12 16:00,,,,,PT_Normal,,,,,hkDJyfJb00K/tpFOiH/oTA,,,,N,0,0,,,2012-06-19 11:47,2012-06-20 10:09,admin,admin,,,
816,83074,773,10524,849,1,100,N,N,N,CP_Drtn,TT_Task,DT_FixedDUR2,RV_OK,TK_Complete,4229ETE140,Telecommunication cable routing IFD,,,,0,0,0,0,80,0,0,0,,2012-02-01 00:00,2012-02-19 00:00,2013-09-26 16:00,2013-09-26 16:00,,2012-06-02 00:00,2012-06-02 00:00,,,2012-03-04 08:00,2012-03-15 16:00,,,,,PT_Normal,,,,,QGLrOtOwQ0KOHybzXBYY5g,,,,N,0,0,,,2012-06-19 11:47,2012-06-20 10:09,admin,admin,,,
817,83075,773,10524,849,1,0,N,N,N,CP_Drtn,TT_Task,DT_FixedDUR2,RV_OK,TK_NotStart,4229ETE150,Telecommunication cable routing IFC,,2280,984,80,0,0,0,80,0,0,0,,,,2013-09-15 08:00,2013-09-26 16:00,,2012-07-29 08:00,2012-08-09 16:00,2012-07-29 08:00,2012-08-09 16:00,2012-07-29 08:00,2012-08-09 16:00,,2013-09-15 08:00,2013-09-26 16:00,,PT_Normal,,,,,jJPtlftcA0iZhUYklZoRyQ,,,,N,0,0,,,2012-06-19 11:47,2012-06-20 09:59,admin,admin,,,
818,83076,773,10502,849,1,0,N,N,N,CP_Drtn,TT_Task,DT_FixedDUR2,RV_OK,TK_NotStart,4229EME210,Material Selection Guide IFF,,2440,1144,40,0,0,0,40,0,0,0,,,,2013-09-22 08:00,2013-09-26 16:00,,2012-07-08 08:00,2012-07-12 16:00,2012-07-08 08:00,2012-07-12 16:00,2012-07-08 08:00,2012-07-12 16:00,,2013-09-22 08:00,2013-09-26 16:00,,PT_Normal,,,,,abtYokGa5US76YU/icrPpQ,,,,N,0,0,,,2012-06-19 11:47,2012-06-20 09:59,admin,admin,,,
819,83130,773,10440,849,1,0,N,N,N,CP_Drtn,TT_Task,DT_FixedDUR2,RV_OK,TK_NotStart,PMS01,Transport deck/topsides to site,,456,456,112,0,0,0,112,0,0,0,,,,2013-02-26 08:00,2013-03-17 16:00,,2012-12-09 08:00,2012-12-26 16:00,2012-12-09 08:00,2012-12-26 16:00,2012-12-09 08:00,2012-12-26 16:00,,2013-02-26 08:00,2013-03-17 16:00,,PT_Normal,,,,,8mrMDvDxeECIiUKsJNHP/A,,,,N,0,0,,,2012-06-20 08:06,2012-06-20 10:08,admin,admin,,,
820,83131,773,10440,849,1,0,N,N,N,CP_Drtn,TT_Task,DT_FixedDUR2,RV_OK,TK_NotStart,PMS04,Install jacket,,0,0,16,0,0,0,16,0,0,0,,,,2013-03-04 08:00,2013-03-05 16:00,,2013-03-04 08:00,2013-03-05 16:00,2013-03-04 08:00,2013-03-05 16:00,2013-03-04 08:00,2013-03-05 16:00,,2013-03-04 08:00,2013-03-05 16:00,,PT_Normal,,,,,ZmDrV8K3qUORpuof9XWlKA,,,,Y,0,0,,,2012-06-20 08:07,2012-06-20 10:09,admin,admin,,,
821,83132,773,10440,849,1,0,N,N,N,CP_Drtn,TT_Task,DT_FixedDUR2,RV_OK,TK_NotStart,PMS06,Install deck/topside module,,0,0,16,0,0,0,16,0,0,0,,,,2013-03-18 08:00,2013-03-19 16:00,,2013-03-18 08:00,2013-03-19 16:00,2013-03-18 08:00,2013-03-19 16:00,2013-03-18 08:00,2013-03-19 16:00,,2013-03-18 08:00,2013-03-19 16:00,,PT_Normal,,,,,OP9Bn1u25kWja+i+wb2UVA,,,,Y,0,0,,,2012-06-20 08:08,2012-06-20 10:09,admin,admin,,,
822,83133,773,10440,849,1,0,N,N,N,CP_Drtn,TT_Task,DT_FixedDUR2,RV_OK,TK_NotStart,PMS02,Transport Jacket and piles,,440,440,112,0,0,0,112,0,0,0,,,,2013-02-12 08:00,2013-03-03 16:00,,2012-11-27 08:00,2012-12-16 16:00,2012-11-27 08:00,2012-12-16 16:00,2012-11-27 08:00,2012-12-16 16:00,,2013-02-12 08:00,2013-03-03 16:00,,PT_Normal,,,,,u8tu0hxffEuSYNxSkZIHXQ,,,,N,0,0,,,2012-06-20 08:09,2012-06-20 10:08,admin,admin,,,
823,83134,773,10440,849,1,0,N,N,N,CP_Drtn,TT_Task,DT_FixedDUR2,RV_OK,TK_NotStart,PMS10,Tie-in risers and sealines,,0,0,32,0,0,0,32,0,0,0,,,,2013-03-20 08:00,2013-03-25 16:00,,2013-03-20 08:00,2013-03-25 16:00,2013-03-20 08:00,2013-03-25 16:00,2013-03-20 08:00,2013-03-25 16:00,,2013-03-20 08:00,2013-03-25 16:00,,PT_Normal,,,,,hk9InbNXVEuIcpNy4g+qLA,,,,Y,0,0,,,2012-06-20 08:10,2012-06-20 10:09,admin,admin,,,
824,83135,773,10440,849,1,0,N,N,N,CP_Drtn,TT_Task,DT_FixedDUR2,RV_OK,TK_NotStart,PMS03,Transport sealine spools to site,,456,440,112,0,0,0,112,0,0,0,,,,2013-02-14 08:00,2013-03-05 16:00,,2012-11-27 08:00,2012-12-16 16:00,2012-11-27 08:00,2012-12-16 16:00,2012-11-27 08:00,2012-12-16 16:00,,2013-02-14 08:00,2013-03-05 16:00,,PT_Normal,,,,,ljftHo4x8UC7qx/DeBpdTA,,,,N,0,0,,,2012-06-20 08:12,2012-06-20 09:51,admin,admin,,,
825,83136,773,10440,849,1,0,N,N,N,CP_Drtn,TT_Task,DT_FixedDUR2,RV_OK,TK_NotStart,PMS09,Install sealines,,16,16,80,0,0,0,80,0,0,0,,,,2013-03-06 08:00,2013-03-19 16:00,,2013-03-04 08:00,2013-03-17 16:00,2013-03-04 08:00,2013-03-17 16:00,2013-03-04 08:00,2013-03-17 16:00,,2013-03-06 08:00,2013-03-19 16:00,,PT_Normal,,,,,4yFcpr/JN0GIUyjZ3eUPZA,,,,N,0,0,,,2012-06-20 08:13,2012-06-20 09:46,admin,admin,,,
826,83137,773,10440,849,1,0,N,N,N,CP_Drtn,TT_Task,DT_FixedDUR2,RV_OK,TK_NotStart,PMS20,Post-installation survey,,0,0,56,0,0,0,56,0,0,0,,,,2013-03-26 08:00,2013-04-03 16:00,,2013-03-26 08:00,2013-04-03 16:00,2013-03-26 08:00,2013-04-03 16:00,2013-03-26 08:00,2013-04-03 16:00,,2013-03-26 08:00,2013-04-03 16:00,,PT_Normal,,,,,Xrig+D66r0e5mKvN+d214g,,,,Y,0,0,,,2012-06-20 08:14,2012-06-20 10:09,admin,admin,,,
827,83138,773,10440,849,1,0,N,N,N,CP_Drtn,TT_Task,DT_FixedDUR2,RV_OK,TK_NotStart,PMS90,Release platform and transfer custody to Drilling,,0,0,8,0,0,0,8,0,0,0,,,,2013-04-04 08:00,2013-04-04 16:00,,2013-04-04 08:00,2013-04-04 16:00,2013-04-04 08:00,2013-04-04 16:00,2013-04-04 08:00,2013-04-04 16:00,,2013-04-04 08:00,2013-04-04 16:00,,PT_Normal,,,,,tiDfywK/tEW0RTerJ/1XoA,,,,Y,0,0,,,2012-06-20 08:15,2012-06-20 10:09,admin,admin,,,
828,83139,773,10440,849,1,0,N,N,N,CP_Drtn,TT_Task,DT_FixedDUR2,RV_OK,TK_NotStart,DRIL01,Drill well no. 1,,0,0,440,0,0,0,440,0,0,0,,,,2013-04-14 08:00,2013-06-27 16:00,,2013-04-14 08:00,2013-06-27 16:00,2013-04-14 08:00,2013-06-27 16:00,2013-04-14 08:00,2013-06-27 16:00,,2013-04-14 08:00,2013-06-27 16:00,,PT_Normal,,,,,bhVpJ081s0aIci50TMDfHA,,,,Y,0,0,,,2012-06-20 08:16,2012-06-20 10:09,admin,admin,,,
829,83140,773,10440,849,1,0,N,N,N,CP_Drtn,TT_Task,DT_FixedDUR2,RV_OK,TK_NotStart,DRIL10,Complete Well no. 1,,0,0,360,0,0,0,360,0,0,0,,,,2013-06-30 08:00,2013-08-29 16:00,,2013-06-30 08:00,2013-08-29 16:00,2013-06-30 08:00,2013-08-29 16:00,2013-06-30 08:00,2013-08-29 16:00,,2013-06-30 08:00,2013-08-29 16:00,,PT_Normal,,,,,4QORcElxnkOpC+YFWU+IPg,,,,Y,0,0,,,2012-06-20 08:17,2012-06-20 10:09,admin,admin,,,
830,83141,773,10440,849,1,0,N,N,N,CP_Drtn,TT_Task,DT_FixedDUR2,RV_OK,TK_NotStart,PMS91,Mechanical complete and hookup well no. 1,,0,0,80,0,0,0,80,0,0,0,,,,2013-09-01 08:00,2013-09-12 16:00,,2013-09-01 08:00,2013-09-12 16:00,2013-09-01 08:00,2013-09-12 16:00,2013-09-01 08:00,2013-09-12 16:00,,2013-09-01 08:00,2013-09-12 16:00,,PT_Normal,,,,,k1Jw37bLS02RU0uqBF54cA,,,,Y,0,0,,,2012-06-20 08:18,2012-06-20 10:09,admin,admin,,,
831,83142,773,10440,849,1,0,N,N,N,CP_Drtn,TT_Task,DT_FixedDUR2,RV_OK,TK_NotStart,PMS96,Final precommissioning and commissioning,,0,0,80,0,0,0,80,0,0,0,,,,2013-09-15 08:00,2013-09-26 16:00,,2013-09-15 08:00,2013-09-26 16:00,2013-09-15 08:00,2013-09-26 16:00,2013-09-15 08:00,2013-09-26 16:00,,2013-09-15 08:00,2013-09-26 16:00,,PT_Normal,,,,,I4O4vtYk0kuCIg5UX5AVhg,,,,Y,0,0,,,2012-06-20 08:19,2012-06-20 10:09,admin,admin,,,
832,83143,773,10440,849,0,0,N,N,N,CP_Drtn,TT_FinMile,DT_FixedDrtn,RV_OK,TK_NotStart,GUP01,Startup and first oil,,0,0,0,0,0,0,0,0,0,0,,,,2013-09-26 16:00,2013-09-26 16:00,,2013-09-26 16:00,2013-09-26 16:00,2013-09-26 16:00,2013-09-26 16:00,2013-09-26 16:00,2013-09-26 16:00,,2013-09-26 16:00,2013-09-26 16:00,,PT_Normal,,,,,E7djEEawoUmIzJs1vobUzw,,,,Y,0,0,,,2012-06-20 08:20,2012-06-20 10:09,admin,admin,,,
833,83144,773,10440,849,1,0,N,N,N,CP_Drtn,TT_Task,DT_FixedDUR2,RV_OK,TK_NotStart,PMS05,Drive piles,,0,0,64,0,0,0,64,0,0,0,,,,2013-03-06 08:00,2013-03-17 16:00,,2013-03-06 08:00,2013-03-17 16:00,2013-03-06 08:00,2013-03-17 16:00,2013-03-06 08:00,2013-03-17 16:00,,2013-03-06 08:00,2013-03-17 16:00,,PT_Normal,,,,,dHr6PaLFl0OwqIvl9x1CFQ,,,,Y,0,0,,,2012-06-20 08:24,2012-06-20 10:09,admin,admin,,,
834,83145,773,10440,849,1,0,N,N,N,CP_Drtn,TT_Task,DT_FixedDUR2,RV_OK,TK_NotStart,PMS00,Preinstallation survey,,0,0,40,0,0,0,40,0,0,0,,,,2013-02-25 08:00,2013-03-03 16:00,,2013-02-25 08:00,2013-03-03 16:00,2013-02-25 08:00,2013-03-03 16:00,2013-02-25 08:00,2013-03-03 16:00,,2013-02-25 08:00,2013-03-03 16:00,,PT_Normal,,,,,emZCp5mDY0miaZYzkIPauQ,,,,Y,0,0,,,2012-06-20 08:25,2012-06-20 10:09,admin,admin,,,
835,83147,773,10440,849,1,0,N,N,N,CP_Drtn,TT_Task,DT_FixedDUR2,RV_OK,TK_NotStart,PMS100,Compile Sealines and transportation bid package,,456,0,112,0,0,0,112,0,0,0,,,,2012-08-28 08:00,2012-09-16 16:00,,2012-06-03 08:00,2012-06-20 16:00,2012-06-03 08:00,2012-06-20 16:00,2012-06-03 08:00,2012-06-20 16:00,,2012-08-28 08:00,2012-09-16 16:00,,PT_Normal,,,,,vjLPhuUfn0OKSvJ8qiS68A,,,,N,0,0,,,2012-06-20 09:18,2012-06-20 10:08,admin,admin,,,
836,83148,773,10440,849,1,0,N,N,N,CP_Drtn,TT_Task,DT_FixedDUR2,RV_OK,TK_NotStart,PMS105,Negotiation/award sealines and transporation package,,456,0,720,0,0,0,720,0,0,0,,,,2012-09-17 08:00,2013-01-27 16:00,,2012-06-21 08:00,2012-11-07 16:00,2012-06-21 08:00,2012-11-07 16:00,2012-06-21 08:00,2012-11-07 16:00,,2012-09-17 08:00,2013-01-27 16:00,,PT_Normal,,,,,h2ui2Y4P50yYcp+OD2LOYg,,,,N,0,0,,,2012-06-20 09:19,2012-06-20 10:08,admin,admin,,,
837,83149,773,10440,849,1,0,N,N,N,CP_Drtn,TT_Task,DT_FixedDUR2,RV_OK,TK_NotStart,PMS110,Mobilization of Sealines and transportation Contractor,,456,0,168,0,0,0,168,0,0,0,,,,2013-01-28 08:00,2013-02-25 16:00,,2012-11-08 08:00,2012-12-06 16:00,2012-11-08 08:00,2012-12-06 16:00,2012-11-08 08:00,2012-12-06 16:00,,2013-01-28 08:00,2013-02-25 16:00,,PT_Normal,,,,,g/nOwE7x+0ebLADjzCRx1A,,,,N,0,0,,,2012-06-20 09:20,2012-06-20 10:08,admin,admin,,,
838,83150,773,10440,849,1,0,N,N,N,CP_Drtn,TT_Task,DT_FixedDUR2,RV_OK,TK_NotStart,OFF02,Compile Platfrom installation ITB,,0,0,40,0,0,0,40,0,0,0,2012-06-13 08:00,,,2012-06-13 08:00,2012-06-19 16:00,,2012-06-13 08:00,2012-06-19 16:00,2012-06-13 08:00,2012-06-19 16:00,2012-06-13 08:00,2012-06-19 16:00,,2012-06-13 08:00,2012-06-19 16:00,CS_MSO,PT_Normal,,,,,MFV4/guAF0m5L4VMAlThBA,,,,Y,0,0,,,2012-06-20 09:22,2012-06-20 10:09,admin,admin,,,
839,83151,773,10440,849,1,0,N,N,N,CP_Drtn,TT_Task,DT_FixedDUR2,RV_OK,TK_NotStart,OFF04,Bid platfrom installation package,,0,0,480,0,0,0,480,0,0,0,,,,2012-06-20 08:00,2012-09-18 16:00,,2012-06-20 08:00,2012-09-18 16:00,2012-06-20 08:00,2012-09-18 16:00,2012-06-20 08:00,2012-09-18 16:00,,2012-06-20 08:00,2012-09-18 16:00,,PT_Normal,,,,,UOcxyYVpIUSbbFgfXarb/A,,,,Y,0,0,,,2012-06-20 09:23,2012-06-20 10:09,admin,admin,,,
840,83152,773,10440,849,1,0,N,N,N,CP_Drtn,TT_Task,DT_FixedDUR2,RV_OK,TK_NotStart,OFF06,TE platfrom installation package,,0,0,168,0,0,0,168,0,0,0,,,,2012-09-19 08:00,2012-10-17 16:00,,2012-09-19 08:00,2012-10-17 16:00,2012-09-19 08:00,2012-10-17 16:00,2012-09-19 08:00,2012-10-17 16:00,,2012-09-19 08:00,2012-10-17 16:00,,PT_Normal,,,,,MYdTmJ3HXEWPY02hLMsAXQ,,,,Y,0,0,,,2012-06-20 09:24,2012-06-20 10:09,admin,admin,,,
841,83153,773,10440,849,1,0,N,N,N,CP_Drtn,TT_Task,DT_FixedDUR2,RV_OK,TK_NotStart,OFF10,CE and negotiation platfrom installation package,,0,0,400,0,0,0,400,0,0,0,,,,2012-10-18 08:00,2013-01-02 16:00,,2012-10-18 08:00,2013-01-02 16:00,2012-10-18 08:00,2013-01-02 16:00,2012-10-18 08:00,2013-01-02 16:00,,2012-10-18 08:00,2013-01-02 16:00,,PT_Normal,,,,,+VUxXgAPwUWfjgGxGHUJEA,,,,Y,0,0,,,2012-06-20 09:25,2012-06-20 10:09,admin,admin,,,
842,83154,773,10440,849,1,0,N,N,N,CP_Drtn,TT_Task,DT_FixedDUR2,RV_OK,TK_NotStart,OFF20,Award offshore installation package,,0,0,56,0,0,0,56,0,0,0,,,,2013-01-03 08:00,2013-01-13 16:00,,2013-01-03 08:00,2013-01-13 16:00,2013-01-03 08:00,2013-01-13 16:00,2013-01-03 08:00,2013-01-13 16:00,,2013-01-03 08:00,2013-01-13 16:00,,PT_Normal,,,,,3qfakHZtQkmlJDypA1iutQ,,,,Y,0,0,,,2012-06-20 09:26,2012-06-20 10:09,admin,admin,,,
843,83155,773,10440,849,1,0,N,N,N,CP_Drtn,TT_Task,DT_FixedDUR2,RV_OK,TK_NotStart,OFF30,Mobilize platform installation contractor,,0,0,240,0,0,0,240,0,0,0,,,,2013-01-14 08:00,2013-02-24 16:00,,2013-01-14 08:00,2013-02-24 16:00,2013-01-14 08:00,2013-02-24 16:00,2013-01-14 08:00,2013-02-24 16:00,,2013-01-14 08:00,2013-02-24 16:00,,PT_Normal,,,,,ujJxObFLEEm0uYprPfZO9Q,,,,Y,0,0,,,2012-06-20 09:27,2012-06-20 10:09,admin,admin,,,
844,83156,773,10440,849,1,0,N,N,N,CP_Drtn,TT_Task,DT_FixedDUR2,RV_OK,TK_NotStart,PM01,Compile transportation and sealines package,,0,0,120,0,0,0,120,0,0,0,2012-06-20 08:00,,,2012-06-20 08:00,2012-07-10 16:00,,2012-06-20 08:00,2012-07-10 16:00,2012-06-20 08:00,2012-07-10 16:00,2012-06-20 08:00,2012-07-10 16:00,,2012-06-20 08:00,2012-07-10 16:00,CS_MSO,PT_Normal,,,,,cRJfHYrfFEO1bQv7RgCZYg,,,,N,0,0,,,2012-06-20 09:38,2012-06-20 09:44,admin,admin,,,
845,83157,773,10440,849,1,0,N,N,N,CP_Drtn,TT_Task,DT_FixedDUR2,RV_OK,TK_NotStart,PM04,Negotiate Sealines and transportation package,,440,0,520,0,0,0,520,0,0,0,,,,2012-10-03 08:00,2013-01-08 16:00,,2012-07-11 08:00,2012-10-16 16:00,2012-07-11 08:00,2012-10-16 16:00,2012-07-11 08:00,2012-10-16 16:00,,2012-10-03 08:00,2013-01-08 16:00,,PT_Normal,,,,,aub8j/6N9U+OZY2AVh9TcA,,,,N,0,0,,,2012-06-20 09:40,2012-06-20 10:08,admin,admin,,,
846,83158,773,10440,849,1,0,N,N,N,CP_Drtn,TT_Task,DT_FixedDUR2,RV_OK,TK_NotStart,PM06,Award transportation and sealines package,,440,0,80,0,0,0,80,0,0,0,,,,2013-01-09 08:00,2013-01-22 16:00,,2012-10-17 08:00,2012-11-06 16:00,2012-10-17 08:00,2012-11-06 16:00,2012-10-17 08:00,2012-11-06 16:00,,2013-01-09 08:00,2013-01-22 16:00,,PT_Normal,,,,,so75Ciry3EKa7FIbOLz5Zw,,,,N,0,0,,,2012-06-20 09:41,2012-06-20 10:08,admin,admin,,,
847,83159,773,10440,849,1,0,N,N,N,CP_Drtn,TT_Task,DT_FixedDUR2,RV_OK,TK_NotStart,PM16,Mobilizae transportation and sealines contractor,,440,0,112,0,0,0,112,0,0,0,,,,2013-01-23 08:00,2013-02-11 16:00,,2012-11-07 08:00,2012-11-26 16:00,2012-11-07 08:00,2012-11-26 16:00,2012-11-07 08:00,2012-11-26 16:00,,2013-01-23 08:00,2013-02-11 16:00,,PT_Normal,,,,,m+CL/e9JzUmMNPlhWiuniw,,,,N,0,0,,,2012-06-20 09:41,2012-06-20 10:08,admin,admin,,,
848,83160,773,10440,849,1,0,N,N,N,CP_Drtn,TT_Task,DT_FixedDUR2,RV_OK,TK_NotStart,DRIL00,Mobilize Drilling Rig,,0,0,40,0,0,0,40,0,0,0,,,,2013-04-07 08:00,2013-04-11 16:00,,2013-04-07 08:00,2013-04-11 16:00,2013-04-07 08:00,2013-04-11 16:00,2013-04-07 08:00,2013-04-11 16:00,,2013-04-07 08:00,2013-04-11 16:00,,PT_Normal,,,,,Eul1nmInyU21QDvSXnCBLg,,,,Y,0,0,,,2012-06-20 09:56,2012-06-20 10:09,admin,admin,,,
849,83161,773,10508,849,1,100,N,N,N,CP_Drtn,TT_Task,DT_FixedDUR2,RV_OK,TK_Complete,4229EEL330,Issue MRQ for solar power unit,,,,0,0,0,0,56,0,0,0,,2011-08-15 08:00,2011-08-23 16:00,2013-09-26 16:00,2013-09-26 16:00,,2012-06-02 00:00,2012-06-02 00:00,,,2011-08-15 08:00,2011-08-23 16:00,,,,,PT_Normal,,,,,5/1sYpGXF0md5JBNbrgpZg,WmAJvILVGES5mrZupbXEPA,,,N,0,0,,,2012-06-20 10:03,2012-06-20 10:09,admin,admin,,,
850,83413,773,10526,841,0,0,N,N,N,CP_Drtn,TT_Mile,DT_FixedDrtn,RV_OK,TK_NotStart,LOPS01,Arrival of 01st Shipment Material Barge ( P/L Spools),,0,128,0,0,0,0,0,0,0,0,2012-09-15 08:00,,,2012-09-15 08:00,2012-09-15 08:00,,2012-09-15 08:00,2012-09-15 08:00,2012-09-15 08:00,2012-09-15 08:00,2012-09-15 08:00,2012-09-15 08:00,,2012-09-15 08:00,2012-09-15 08:00,CS_MSO,PT_Normal,,,,,Q/hM5E23JEu4Q5BxJa136g,B4Hx/kkxQZKPJEG8DiZMqQ,,,N,0,0,,,2012-06-20 10:24,2012-06-20 10:24,admin,admin,,,
851,83414,773,10526,841,1,0,N,N,N,CP_Drtn,TT_Task,DT_FixedDUR2,RV_OK,TK_NotStart,LOPS02,1st Shipment Material Barge Preparation,,1088,0,96,0,0,0,96,0,0,0,,,,2013-03-20 08:00,2013-04-02 16:00,,2012-10-03 08:00,2012-10-17 16:00,2012-10-03 08:00,2012-10-17 16:00,2012-10-03 08:00,2012-10-17 16:00,,2013-03-20 08:00,2013-04-02 16:00,,PT_Normal,,,,,j70Pc4cUwkCmSjpFYi6xGQ,ffJmeitJThGKpY3WVSZDNQ,,,N,0,0,,,2012-06-20 10:24,2012-06-20 10:24,admin,admin,,,
852,83415,773,10526,841,1,0,N,N,N,CP_Drtn,TT_Task,DT_FixedDUR2,RV_OK,TK_NotStart,LOPS03,"L/O & Sea Fastening (P/L Spools 18"""" & 8"""")",,1088,0,32,0,0,0,32,0,0,0,,,,2013-04-03 08:00,2013-04-07 16:00,,2012-10-18 08:00,2012-10-22 16:00,2012-10-18 08:00,2012-10-22 16:00,2012-10-18 08:00,2012-10-22 16:00,,2013-04-03 08:00,2013-04-07 16:00,,PT_Normal,,,,,R+EuesGPmUSLN/kdUFlYzA,0IwOiWOuTGWgp9eZJV76QQ,,,N,0,0,,,2012-06-20 10:24,2012-06-20 10:24,admin,admin,,,
853,83416,773,10527,841,0,0,N,N,N,CP_Drtn,TT_Mile,DT_FixedDrtn,RV_OK,TK_NotStart,LOJK01,Arrival of 02nd Shipment Material Barge ( Jacket and Piles ),,0,263.983333,0,0,0,0,0,0,0,0,2012-12-01 08:01,,,2012-12-01 08:01,2012-12-01 08:01,,2012-12-01 08:01,2012-12-01 08:01,2012-12-01 08:01,2012-12-01 08:01,2012-12-01 08:01,2012-12-01 08:01,,2012-12-01 08:01,2012-12-01 08:01,CS_MSO,PT_Normal,,,,,F1n4jsaOSEuQGR9fW3vO7Q,TZSnzFwbTP2WYUW5WMHAXA,,,N,0,0,,,2012-06-20 10:24,2012-06-20 10:24,admin,admin,,,
854,83417,773,10527,841,1,0,N,N,N,CP_Drtn,TT_Task,DT_FixedDUR2,RV_OK,TK_NotStart,LOJK02,02nd Shipment Material Barge Preparation,,208,0,96,0,0,0,96,0,0,0,,,,2013-02-11 08:00,2013-02-24 16:00,,2013-01-09 08:00,2013-01-22 16:00,2013-01-09 08:00,2013-01-22 16:00,2013-01-09 08:00,2013-01-22 16:00,,2013-02-11 08:00,2013-02-24 16:00,,PT_Normal,,,,,27fLrBdk5k2yLBklCzOp1Q,XbtAi6jCTDyBXVHSpw5OSQ,,,N,0,0,,,2012-06-20 10:24,2012-06-20 10:24,admin,admin,,,
855,83418,773,10527,841,1,0,N,N,N,CP_Drtn,TT_Task,DT_FixedDUR2,RV_OK,TK_NotStart,LOJK03,L/O & Sea fastening ( Jacket & Piles ),,208,0,56,0,0,0,56,0,0,0,,,,2013-02-25 08:00,2013-03-04 16:00,,2013-01-23 08:00,2013-01-31 16:00,2013-01-23 08:00,2013-01-31 16:00,2013-01-23 08:00,2013-01-31 16:00,,2013-02-25 08:00,2013-03-04 16:00,,PT_Normal,,,,,2uUx9JS+Yk6Xldv1my9N5g,0h5qrf7kSZW3DGU5wFjrDw,,,N,0,0,,,2012-06-20 10:24,2012-06-20 10:24,admin,admin,,,
856,83419,773,10528,841,0,0,N,N,N,CP_Drtn,TT_Mile,DT_FixedDrtn,RV_OK,TK_NotStart,LODK01,Arrival of 03rd Shipment Material Barge ( Deck C/W TSF ),,-0.016667,104,0,0,0,0,0,0,0,0,2013-03-01 08:01,,,2013-02-28 15:59,2013-02-28 15:59,,2013-03-02 08:00,2013-03-02 08:00,2013-03-02 08:00,2013-03-02 08:00,2013-03-02 08:00,2013-03-02 08:00,,2013-02-28 15:59,2013-02-28 15:59,CS_MSO,PT_Normal,,,,,xVG2HGKMck2Hug7zziNfEg,ExIEDAbgRLSmFck0X+OxYg,,,N,0,0,,,2012-06-20 10:24,2012-06-20 10:24,admin,admin,,,
857,83420,773,10528,841,1,0,N,N,N,CP_Drtn,TT_Task,DT_FixedDUR2,RV_OK,TK_NotStart,LODK02,3rd Shipment Material Barge Preparation,,0,0,96,0,0,0,96,0,0,0,,,,2013-03-17 08:00,2013-03-30 16:00,,2013-03-17 08:00,2013-03-30 16:00,2013-03-17 08:00,2013-03-30 16:00,2013-03-17 08:00,2013-03-30 16:00,,2013-03-17 08:00,2013-03-30 16:00,,PT_Normal,,,,,pCfbPUmqEkivTss6vIUYGQ,lPDdUYuUTIydlmlcan93BQ,,,Y,0,0,,,2012-06-20 10:24,2012-06-20 10:24,admin,admin,,,
858,83421,773,10528,841,1,0,N,N,N,CP_Drtn,TT_Task,DT_FixedDUR2,RV_OK,TK_NotStart,LODK03,L/O & Sea fastening ( Deck),,0,0,56,0,0,0,56,0,0,0,,,,2013-03-31 08:00,2013-04-07 16:00,,2013-03-31 08:00,2013-04-07 16:00,2013-03-31 08:00,2013-04-07 16:00,2013-03-31 08:00,2013-04-07 16:00,,2013-03-31 08:00,2013-04-07 16:00,,PT_Normal,,,,,BulOZNzeh0KCC2utE+U3IQ,a29m8wZtSbmmAh/FPoIQAw,,,Y,0,0,,,2012-06-20 10:24,2012-06-20 10:24,admin,admin,,,
859,83422,773,10526,841,0,0,N,N,N,CP_Drtn,TT_Mile,DT_FixedDrtn,RV_OK,TK_NotStart,LOPS11,Arrival of 01st Shipment Material Barge ( P/L Spools),,0,128,0,0,0,0,0,0,0,0,2012-09-15 08:00,,,2012-09-15 08:00,2012-09-15 08:00,,2012-09-15 08:00,2012-09-15 08:00,2012-09-15 08:00,2012-09-15 08:00,2012-09-15 08:00,2012-09-15 08:00,,2012-09-15 08:00,2012-09-15 08:00,CS_MSO,PT_Normal,,,,,5HdkWiP/mEK/zwhIzd4bgw,xehV9+x7ZE2jS/zzmhzWQA,,,N,0,0,,,2012-06-20 10:24,2012-06-20 10:24,admin,admin,,,
860,83423,773,10526,841,1,0,N,N,N,CP_Drtn,TT_Task,DT_FixedDUR2,RV_OK,TK_NotStart,LOPS12,1st Shipment Material Barge Preparation,,1088,0,96,0,0,0,96,0,0,0,,,,2013-03-20 08:00,2013-04-02 16:00,,2012-10-03 08:00,2012-10-17 16:00,2012-10-03 08:00,2012-10-17 16:00,2012-10-03 08:00,2012-10-17 16:00,,2013-03-20 08:00,2013-04-02 16:00,,PT_Normal,,,,,rhOJB8388kCDSM2hSaI6lg,ndqnrpRNm0Kh7Ee9x77pLg,,,N,0,0,,,2012-06-20 10:24,2012-06-20 10:24,admin,admin,,,
861,83424,773,10526,841,1,0,N,N,N,CP_Drtn,TT_Task,DT_FixedDUR2,RV_OK,TK_NotStart,LOPS13,"L/O & Sea Fastening (P/L Spools 18"""" & 8"""")",,1088,0,32,0,0,0,32,0,0,0,,,,2013-04-03 08:00,2013-04-07 16:00,,2012-10-18 08:00,2012-10-22 16:00,2012-10-18 08:00,2012-10-22 16:00,2012-10-18 08:00,2012-10-22 16:00,,2013-04-03 08:00,2013-04-07 16:00,,PT_Normal,,,,,AilmcQlQgEq6KXdunIKXKQ,kp9L75XeSkWVYE8hGyBpLQ,,,N,0,0,,,2012-06-20 10:24,2012-06-20 10:24,admin,admin,,,
862,83425,773,10527,841,0,0,N,N,N,CP_Drtn,TT_Mile,DT_FixedDrtn,RV_OK,TK_NotStart,LOJK11,Arrival of 02nd Shipment Material Barge ( Jacket and Piles ),,0,263.983333,0,0,0,0,0,0,0,0,2012-12-01 08:01,,,2012-12-01 08:01,2012-12-01 08:01,,2012-12-01 08:01,2012-12-01 08:01,2012-12-01 08:01,2012-12-01 08:01,2012-12-01 08:01,2012-12-01 08:01,,2012-12-01 08:01,2012-12-01 08:01,CS_MSO,PT_Normal,,,,,LPOef8SoHUaqAvVfbyvu7A,/rdQ3u43Y0aVeyWgwwuYrQ,,,N,0,0,,,2012-06-20 10:24,2012-06-20 10:24,admin,admin,,,
863,83426,773,10527,841,1,0,N,N,N,CP_Drtn,TT_Task,DT_FixedDUR2,RV_OK,TK_NotStart,LOJK12,02nd Shipment Material Barge Preparation,,208,0,96,0,0,0,96,0,0,0,,,,2013-02-11 08:00,2013-02-24 16:00,,2013-01-09 08:00,2013-01-22 16:00,2013-01-09 08:00,2013-01-22 16:00,2013-01-09 08:00,2013-01-22 16:00,,2013-02-11 08:00,2013-02-24 16:00,,PT_Normal,,,,,6pObmUSUiESsMZCPvtN7wQ,S7wGNTJDfUW+8AjycDcj2g,,,N,0,0,,,2012-06-20 10:24,2012-06-20 10:24,admin,admin,,,
864,83427,773,10527,841,1,0,N,N,N,CP_Drtn,TT_Task,DT_FixedDUR2,RV_OK,TK_NotStart,LOJK13,L/O & Sea fastening ( Jacket & Piles ),,208,0,56,0,0,0,56,0,0,0,,,,2013-02-25 08:00,2013-03-04 16:00,,2013-01-23 08:00,2013-01-31 16:00,2013-01-23 08:00,2013-01-31 16:00,2013-01-23 08:00,2013-01-31 16:00,,2013-02-25 08:00,2013-03-04 16:00,,PT_Normal,,,,,6N/VYkiFekucw5iQIBohDA,T2pkffL22UqmUBjuIecM7w,,,N,0,0,,,2012-06-20 10:24,2012-06-20 10:24,admin,admin,,,
865,83428,773,10528,841,0,0,N,N,N,CP_Drtn,TT_Mile,DT_FixedDrtn,RV_OK,TK_NotStart,LODK11,Arrival of 03rd Shipment Material Barge ( Deck C/W TSF ),,-0.016667,104,0,0,0,0,0,0,0,0,2013-03-01 08:01,,,2013-02-28 15:59,2013-02-28 15:59,,2013-03-02 08:00,2013-03-02 08:00,2013-03-02 08:00,2013-03-02 08:00,2013-03-02 08:00,2013-03-02 08:00,,2013-02-28 15:59,2013-02-28 15:59,CS_MSO,PT_Normal,,,,,1CnuJg8JE0yK2unDCTpq2g,+yVxVOPraUyK1NRhdp+wfA,,,N,0,0,,,2012-06-20 10:24,2012-06-20 10:24,admin,admin,,,
866,83429,773,10528,841,1,0,N,N,N,CP_Drtn,TT_Task,DT_FixedDUR2,RV_OK,TK_NotStart,LODK12,3rd Shipment Material Barge Preparation,,0,0,96,0,0,0,96,0,0,0,,,,2013-03-17 08:00,2013-03-30 16:00,,2013-03-17 08:00,2013-03-30 16:00,2013-03-17 08:00,2013-03-30 16:00,2013-03-17 08:00,2013-03-30 16:00,,2013-03-17 08:00,2013-03-30 16:00,,PT_Normal,,,,,4nlcE0fB1EOWnthr/I6/dg,udpKSE0PREWpEz84cupRDw,,,Y,0,0,,,2012-06-20 10:24,2012-06-20 10:24,admin,admin,,,
867,83430,773,10528,841,1,0,N,N,N,CP_Drtn,TT_Task,DT_FixedDUR2,RV_OK,TK_NotStart,LODK13,L/O & Sea fastening ( Deck),,0,0,56,0,0,0,56,0,0,0,,,,2013-03-31 08:00,2013-04-07 16:00,,2013-03-31 08:00,2013-04-07 16:00,2013-03-31 08:00,2013-04-07 16:00,2013-03-31 08:00,2013-04-07 16:00,,2013-03-31 08:00,2013-04-07 16:00,,PT_Normal,,,,,k/q/314i40q/k/NX1JxXDg,InSRN6FydkWjBf3988Pjxg,,,Y,0,0,,,2012-06-20 10:24,2012-06-20 10:24,admin,admin,,,
868,83431,773,10526,841,0,0,N,N,N,CP_Drtn,TT_Mile,DT_FixedDrtn,RV_OK,TK_NotStart,LOPS21,Arrival of 01st Shipment Material Barge ( P/L Spools),,0,128,0,0,0,0,0,0,0,0,2012-09-15 08:00,,,2012-09-15 08:00,2012-09-15 08:00,,2012-09-15 08:00,2012-09-15 08:00,2012-09-15 08:00,2012-09-15 08:00,2012-09-15 08:00,2012-09-15 08:00,,2012-09-15 08:00,2012-09-15 08:00,CS_MSO,PT_Normal,,,,,Exbgx/XxuUKyl+Hneg4ljw,OzUFIPks302wsyR+uazpaQ,,,N,0,0,,,2012-06-20 10:24,2012-06-20 10:24,admin,admin,,,
869,83432,773,10526,841,1,0,N,N,N,CP_Drtn,TT_Task,DT_FixedDUR2,RV_OK,TK_NotStart,LOPS22,1st Shipment Material Barge Preparation,,1088,0,96,0,0,0,96,0,0,0,,,,2013-03-20 08:00,2013-04-02 16:00,,2012-10-03 08:00,2012-10-17 16:00,2012-10-03 08:00,2012-10-17 16:00,2012-10-03 08:00,2012-10-17 16:00,,2013-03-20 08:00,2013-04-02 16:00,,PT_Normal,,,,,bRxAQzopckm7X38rsMgC2g,hG7/16szS0WaIWMhbYJ4Sw,,,N,0,0,,,2012-06-20 10:24,2012-06-20 10:24,admin,admin,,,
870,83433,773,10526,841,1,0,N,N,N,CP_Drtn,TT_Task,DT_FixedDUR2,RV_OK,TK_NotStart,LOPS23,"L/O & Sea Fastening (P/L Spools 18"""" & 8"""")",,1088,0,32,0,0,0,32,0,0,0,,,,2013-04-03 08:00,2013-04-07 16:00,,2012-10-18 08:00,2012-10-22 16:00,2012-10-18 08:00,2012-10-22 16:00,2012-10-18 08:00,2012-10-22 16:00,,2013-04-03 08:00,2013-04-07 16:00,,PT_Normal,,,,,uodoIFUkI0OAzADXYcFoKw,9X0C/NlmhEKajjVgmtxwCQ,,,N,0,0,,,2012-06-20 10:24,2012-06-20 10:24,admin,admin,,,
871,83434,773,10527,841,0,0,N,N,N,CP_Drtn,TT_Mile,DT_FixedDrtn,RV_OK,TK_NotStart,LOJK21,Arrival of 02nd Shipment Material Barge ( Jacket and Piles ),,0,263.983333,0,0,0,0,0,0,0,0,2012-12-01 08:01,,,2012-12-01 08:01,2012-12-01 08:01,,2012-12-01 08:01,2012-12-01 08:01,2012-12-01 08:01,2012-12-01 08:01,2012-12-01 08:01,2012-12-01 08:01,,2012-12-01 08:01,2012-12-01 08:01,CS_MSO,PT_Normal,,,,,mHmAeJOSiUqP0BaxK7YcRw,/YqSb2uDrUy1yz+LqhHkBQ,,,N,0,0,,,2012-06-20 10:24,2012-06-20 10:24,admin,admin,,,
872,83435,773,10527,841,1,0,N,N,N,CP_Drtn,TT_Task,DT_FixedDUR2,RV_OK,TK_NotStart,LOJK22,02nd Shipment Material Barge Preparation,,208,0,96,0,0,0,96,0,0,0,,,,2013-02-11 08:00,2013-02-24 16:00,,2013-01-09 08:00,2013-01-22 16:00,2013-01-09 08:00,2013-01-22 16:00,2013-01-09 08:00,2013-01-22 16:00,,2013-02-11 08:00,2013-02-24 16:00,,PT_Normal,,,,,kBQ6MXl97EuRgDor1kRYbg,ocSaukuEpkOIabB/W5qCDQ,,,N,0,0,,,2012-06-20 10:24,2012-06-20 10:24,admin,admin,,,
873,83436,773,10527,841,1,0,N,N,N,CP_Drtn,TT_Task,DT_FixedDUR2,RV_OK,TK_NotStart,LOJK23,L/O & Sea fastening ( Jacket & Piles ),,208,0,56,0,0,0,56,0,0,0,,,,2013-02-25 08:00,2013-03-04 16:00,,2013-01-23 08:00,2013-01-31 16:00,2013-01-23 08:00,2013-01-31 16:00,2013-01-23 08:00,2013-01-31 16:00,,2013-02-25 08:00,2013-03-04 16:00,,PT_Normal,,,,,peyqxn5BzE2Gtpypk8AVKA,/lwB05gFY0WNrD1Qr8RDPA,,,N,0,0,,,2012-06-20 10:24,2012-06-20 10:24,admin,admin,,,
874,83437,773,10528,841,0,0,N,N,N,CP_Drtn,TT_Mile,DT_FixedDrtn,RV_OK,TK_NotStart,LODK21,Arrival of 03rd Shipment Material Barge ( Deck C/W TSF ),,-0.016667,104,0,0,0,0,0,0,0,0,2013-03-01 08:01,,,2013-02-28 15:59,2013-02-28 15:59,,2013-03-02 08:00,2013-03-02 08:00,2013-03-02 08:00,2013-03-02 08:00,2013-03-02 08:00,2013-03-02 08:00,,2013-02-28 15:59,2013-02-28 15:59,CS_MSO,PT_Normal,,,,,ZapoGrLAUk2wQJ/2Isojsw,+bmImlAl+EeMuO3E8IZLbQ,,,N,0,0,,,2012-06-20 10:24,2012-06-20 10:24,admin,admin,,,
875,83438,773,10528,841,1,0,N,N,N,CP_Drtn,TT_Task,DT_FixedDUR2,RV_OK,TK_NotStart,LODK22,3rd Shipment Material Barge Preparation,,0,0,96,0,0,0,96,0,0,0,,,,2013-03-17 08:00,2013-03-30 16:00,,2013-03-17 08:00,2013-03-30 16:00,2013-03-17 08:00,2013-03-30 16:00,2013-03-17 08:00,2013-03-30 16:00,,2013-03-17 08:00,2013-03-30 16:00,,PT_Normal,,,,,T3aGknbQ90aZ+8srPLiCCQ,bMaFX4P8DE6/oRnqQAQohg,,,Y,0,0,,,2012-06-20 10:24,2012-06-20 10:24,admin,admin,,,
876,83439,773,10528,841,1,0,N,N,N,CP_Drtn,TT_Task,DT_FixedDUR2,RV_OK,TK_NotStart,LODK23,L/O & Sea fastening ( Deck),,0,0,56,0,0,0,56,0,0,0,,,,2013-03-31 08:00,2013-04-07 16:00,,2013-03-31 08:00,2013-04-07 16:00,2013-03-31 08:00,2013-04-07 16:00,2013-03-31 08:00,2013-04-07 16:00,,2013-03-31 08:00,2013-04-07 16:00,,PT_Normal,,,,,7dYqcLJLZ0iexQIo6pJ0ow,spE5xHjDeUSbwXz8P4JYbA,,,Y,0,0,,,2012-06-20 10:24,2012-06-20 10:24,admin,admin,,,
877,83440,773,10526,841,0,0,N,N,N,CP_Drtn,TT_Mile,DT_FixedDrtn,RV_OK,TK_NotStart,LOPS31,Arrival of 01st Shipment Material Barge ( P/L Spools),,0,128,0,0,0,0,0,0,0,0,2012-09-15 08:00,,,2012-09-15 08:00,2012-09-15 08:00,,2012-09-15 08:00,2012-09-15 08:00,2012-09-15 08:00,2012-09-15 08:00,2012-09-15 08:00,2012-09-15 08:00,,2012-09-15 08:00,2012-09-15 08:00,CS_MSO,PT_Normal,,,,,rw84o5FMeUGUFxTuncLv7w,Dyg+a2NAokqFGcF4r9B25Q,,,N,0,0,,,2012-06-20 10:24,2012-06-20 10:24,admin,admin,,,
878,83441,773,10526,841,1,0,N,N,N,CP_Drtn,TT_Task,DT_FixedDUR2,RV_OK,TK_NotStart,LOPS32,1st Shipment Material Barge Preparation,,1088,0,96,0,0,0,96,0,0,0,,,,2013-03-20 08:00,2013-04-02 16:00,,2012-10-03 08:00,2012-10-17 16:00,2012-10-03 08:00,2012-10-17 16:00,2012-10-03 08:00,2012-10-17 16:00,,2013-03-20 08:00,2013-04-02 16:00,,PT_Normal,,,,,VpqaATgIbkWYxP1POPgn2g,KoXyzm4kEkadNJDSUREknA,,,N,0,0,,,2012-06-20 10:24,2012-06-20 10:24,admin,admin,,,
879,83442,773,10526,841,1,0,N,N,N,CP_Drtn,TT_Task,DT_FixedDUR2,RV_OK,TK_NotStart,LOPS33,"L/O & Sea Fastening (P/L Spools 18"""" & 8"""")",,1088,0,32,0,0,0,32,0,0,0,,,,2013-04-03 08:00,2013-04-07 16:00,,2012-10-18 08:00,2012-10-22 16:00,2012-10-18 08:00,2012-10-22 16:00,2012-10-18 08:00,2012-10-22 16:00,,2013-04-03 08:00,2013-04-07 16:00,,PT_Normal,,,,,vAObeukHakm+f97GKw9Fng,Pc/YYtCKm02U5c994EZd+A,,,N,0,0,,,2012-06-20 10:24,2012-06-20 10:24,admin,admin,,,
880,83443,773,10527,841,0,0,N,N,N,CP_Drtn,TT_Mile,DT_FixedDrtn,RV_OK,TK_NotStart,LOJK31,Arrival of 02nd Shipment Material Barge ( Jacket and Piles ),,0,263.983333,0,0,0,0,0,0,0,0,2012-12-01 08:01,,,2012-12-01 08:01,2012-12-01 08:01,,2012-12-01 08:01,2012-12-01 08:01,2012-12-01 08:01,2012-12-01 08:01,2012-12-01 08:01,2012-12-01 08:01,,2012-12-01 08:01,2012-12-01 08:01,CS_MSO,PT_Normal,,,,,fboHMqUiHE2FdbK2i1vHIQ,twClvn9nfkSAZ2CGd6SI2g,,,N,0,0,,,2012-06-20 10:24,2012-06-20 10:24,admin,admin,,,
881,83444,773,10527,841,1,0,N,N,N,CP_Drtn,TT_Task,DT_FixedDUR2,RV_OK,TK_NotStart,LOJK32,02nd Shipment Material Barge Preparation,,208,0,96,0,0,0,96,0,0,0,,,,2013-02-11 08:00,2013-02-24 16:00,,2013-01-09 08:00,2013-01-22 16:00,2013-01-09 08:00,2013-01-22 16:00,2013-01-09 08:00,2013-01-22 16:00,,2013-02-11 08:00,2013-02-24 16:00,,PT_Normal,,,,,TKXVvjatO06AxUr8uaansg,oOyb74rhgkOJ7CwJQccUrg,,,N,0,0,,,2012-06-20 10:24,2012-06-20 10:24,admin,admin,,,
882,83445,773,10527,841,1,0,N,N,N,CP_Drtn,TT_Task,DT_FixedDUR2,RV_OK,TK_NotStart,LOJK33,L/O & Sea fastening ( Jacket & Piles ),,208,0,56,0,0,0,56,0,0,0,,,,2013-02-25 08:00,2013-03-04 16:00,,2013-01-23 08:00,2013-01-31 16:00,2013-01-23 08:00,2013-01-31 16:00,2013-01-23 08:00,2013-01-31 16:00,,2013-02-25 08:00,2013-03-04 16:00,,PT_Normal,,,,,56ADbRfZ0kumMCjeEHe6KA,CYmaXCva40q7ILqupixf4Q,,,N,0,0,,,2012-06-20 10:24,2012-06-20 10:24,admin,admin,,,
883,83446,773,10528,841,0,0,N,N,N,CP_Drtn,TT_Mile,DT_FixedDrtn,RV_OK,TK_NotStart,LODK31,Arrival of 03rd Shipment Material Barge ( Deck C/W TSF ),,-0.016667,104,0,0,0,0,0,0,0,0,2013-03-01 08:01,,,2013-02-28 15:59,2013-02-28 15:59,,2013-03-02 08:00,2013-03-02 08:00,2013-03-02 08:00,2013-03-02 08:00,2013-03-02 08:00,2013-03-02 08:00,,2013-02-28 15:59,2013-02-28 15:59,CS_MSO,PT_Normal,,,,,hohSiiodx0muTWqipPpWWg,43qRNQrFQk+Kk0OAmvdiKg,,,N,0,0,,,2012-06-20 10:24,2012-06-20 10:24,admin,admin,,,
884,83447,773,10528,841,1,0,N,N,N,CP_Drtn,TT_Task,DT_FixedDUR2,RV_OK,TK_NotStart,LODK32,3rd Shipment Material Barge Preparation,,0,0,96,0,0,0,96,0,0,0,,,,2013-03-17 08:00,2013-03-30 16:00,,2013-03-17 08:00,2013-03-30 16:00,2013-03-17 08:00,2013-03-30 16:00,2013-03-17 08:00,2013-03-30 16:00,,2013-03-17 08:00,2013-03-30 16:00,,PT_Normal,,,,,SIjDSqVf/ESobIp67aAimg,b27pdaUgmEqC59giZ3e4Hw,,,Y,0,0,,,2012-06-20 10:24,2012-06-20 10:24,admin,admin,,,
885,83448,773,10528,841,1,0,N,N,N,CP_Drtn,TT_Task,DT_FixedDUR2,RV_OK,TK_NotStart,LODK33,L/O & Sea fastening ( Deck),,0,0,56,0,0,0,56,0,0,0,,,,2013-03-31 08:00,2013-04-07 16:00,,2013-03-31 08:00,2013-04-07 16:00,2013-03-31 08:00,2013-04-07 16:00,2013-03-31 08:00,2013-04-07 16:00,,2013-03-31 08:00,2013-04-07 16:00,,PT_Normal,,,,,zhyd/zhbukWHvtnre2HvcA,cdhHzmpY6UWV3f/Jk4hxxw,,,Y,0,0,,,2012-06-20 10:24,2012-06-20 10:24,admin,admin,,,
