,task_id,proj_id,wbs_id,clndr_id,est_wt,phys_complete_pct,rev_fdbk_flag,lock_plan_flag,auto_compute_act_flag,complete_pct_type,task_type,duration_type,review_type,status_code,task_code,task_name,rsrc_id,total_float_hr_cnt,free_float_hr_cnt,remain_drtn_hr_cnt,act_work_qty,remain_work_qty,target_work_qty,target_drtn_hr_cnt,target_equip_qty,act_equip_qty,remain_equip_qty,cstr_date,act_start_date,act_end_date,late_start_date,late_end_date,expect_end_date,early_start_date,early_end_date,restart_date,reend_date,target_start_date,target_end_date,review_end_date,rem_late_start_date,rem_late_end_date,cstr_type,priority_type,suspend_date,resume_date,float_path,float_path_order,guid,tmpl_guid,cstr_date2,cstr_type2,driving_path_flag,act_this_per_work_qty,act_this_per_equip_qty,external_early_start_date,external_late_end_date,create_date,update_date,create_user,update_user
0,82435,1296,10944,1422,0,0,N,N,N,CP_Phys,TT_Mile,DT_FixedDrtn,RV_OK,TK_NotStart,BEW/GEN/MS/0010,Issue of Work Comencement Order,,0,0,0,0,0,0,0,0,0,0,,,,2013-07-16 08:00,2013-07-16 08:00,,2013-07-16 08:00,2013-07-16 08:00,2013-07-16 08:00,2013-07-16 08:00,2013-07-16 08:00,2013-07-16 08:00,,2013-07-16 08:00,2013-07-16 08:00,,PT_Normal,,,,,WRr2pxYSUUiGpR18AdfT/w,,,,Y,0,0,,,2013-10-09 11:38,2013-11-12 11:41,admin,admin
1,82436,1296,10951,1422,1,0,N,N,N,CP_Phys,TT_Task,DT_FixedDUR2,RV_OK,TK_NotStart,BEW/MO/SS/1000,Submission of Method of Statements,,513,0,126,0,0,0,126,0,0,0,,,,2013-09-11 07:00,2013-09-24 17:00,,2013-07-16 08:00,2013-07-29 17:00,2013-07-16 08:00,2013-07-29 17:00,2013-07-16 08:00,2013-07-29 17:00,,2013-09-11 07:00,2013-09-24 17:00,,PT_Normal,,,,,ckFpmCmgdkqA5/JgNONMfw,,,,N,0,0,,,2013-10-09 11:38,2013-11-11 16:56,admin,admin
2,82437,1296,10951,1422,1,0,N,N,N,CP_Phys,TT_Task,DT_FixedDUR2,RV_OK,TK_NotStart,BEW/MO/SS/1010,Submission of Quality Plan,,513,0,126,0,0,0,126,0,0,0,,,,2013-09-11 07:00,2013-09-24 17:00,,2013-07-16 08:00,2013-07-29 17:00,2013-07-16 08:00,2013-07-29 17:00,2013-07-16 08:00,2013-07-29 17:00,,2013-09-11 07:00,2013-09-24 17:00,,PT_Normal,,,,,ddiEjd7suEKjQz+U572BHg,,,,N,0,0,,,2013-10-09 11:38,2013-11-11 22:09,admin,admin
3,82438,1296,10951,1422,1,0,N,N,N,CP_Phys,TT_Task,DT_FixedDUR2,RV_OK,TK_NotStart,BEW/MO/SS/1020,Submission of Clause 14 Programme,,513,0,126,0,0,0,126,0,0,0,,,,2013-09-11 07:00,2013-09-24 17:00,,2013-07-16 08:00,2013-07-29 17:00,2013-07-16 08:00,2013-07-29 17:00,2013-07-16 08:00,2013-07-29 17:00,,2013-09-11 07:00,2013-09-24 17:00,,PT_Normal,,,,,zI9m5NLkwUiPzW4cxEVflg,,,,N,0,0,,,2013-10-09 11:38,2013-11-11 16:56,admin,admin
4,82439,1296,10951,1422,1,0,N,N,N,CP_Phys,TT_Task,DT_FixedDUR2,RV_OK,TK_NotStart,BEW/MO/SS/1030,Submission of Safety Plan,,513,0,126,0,0,0,126,0,0,0,,,,2013-09-11 07:00,2013-09-24 17:00,,2013-07-16 08:00,2013-07-29 17:00,2013-07-16 08:00,2013-07-29 17:00,2013-07-16 08:00,2013-07-29 17:00,,2013-09-11 07:00,2013-09-24 17:00,,PT_Normal,,,,,CeKXatGaXEeYjCYPjClxgw,,,,N,0,0,,,2013-10-09 11:38,2013-11-11 16:56,admin,admin
5,82440,1296,10958,1422,1,0,N,N,N,CP_Phys,TT_Task,DT_FixedDUR2,RV_OK,TK_NotStart,BEW/MO/NC/1000,Notice of Intent to all Statutory Authorities,,0,0,45,0,0,0,45,0,0,0,,,,2013-07-16 08:00,2013-07-20 17:00,,2013-07-16 08:00,2013-07-20 17:00,2013-07-16 08:00,2013-07-20 17:00,2013-07-16 08:00,2013-07-20 17:00,,2013-07-16 08:00,2013-07-20 17:00,,PT_Normal,,,,,tWC2QAv42UiqG/PwOF/+wA,,,,Y,0,0,,,2013-10-09 11:38,2013-11-12 11:41,admin,admin
6,82441,1296,10958,1422,1,0,N,N,N,CP_Phys,TT_Task,DT_FixedDUR2,RV_OK,TK_NotStart,BEW/MO/NC/1220,Clearance from SKJV safety Dept,,5002,0,126,0,0,0,126,0,0,0,,,,2015-02-17 15:00,2015-03-03 15:00,,2013-08-11 07:00,2013-08-24 17:00,2013-08-11 07:00,2013-08-24 17:00,2013-08-11 07:00,2013-08-24 17:00,,2015-02-17 15:00,2015-03-03 15:00,,PT_Normal,,,,,twTuXjjSFE219uzcJ2M9NA,,,,N,0,0,,,2013-10-09 11:38,2013-11-11 17:02,admin,admin
7,82442,1296,10958,1422,1,0,N,N,N,CP_Phys,TT_Task,DT_FixedDUR2,RV_OK,TK_NotStart,BEW/MO/NC/1010,NOC for Batching Plant Location,,1205.98333333333,189,189,0,0,0,189,0,0,0,,,,2013-12-01 16:59,2013-12-22 16:59,,2013-07-21 07:00,2013-08-10 17:00,2013-07-21 07:00,2013-08-10 17:00,2013-07-21 07:00,2013-08-10 17:00,,2013-12-01 16:59,2013-12-22 16:59,,PT_Normal,,,,,rKOIh6Evy0q42KyMxW/pSg,,,,N,0,0,,,2013-10-09 11:38,2013-11-11 16:56,admin,admin
8,82443,1296,10958,1422,1,0,N,N,N,CP_Phys,TT_Task,DT_FixedDUR2,RV_OK,TK_NotStart,BEW/MO/NC/1020,NOC for crusher Location,,405,1,189,0,0,0,189,0,0,0,,,,2013-09-04 07:00,2013-09-24 17:00,,2013-07-21 07:00,2013-08-10 17:00,2013-07-21 07:00,2013-08-10 17:00,2013-07-21 07:00,2013-08-10 17:00,,2013-09-04 07:00,2013-09-24 17:00,,PT_Normal,,,,,kA01sAK+O0ybDcW6Pr6PbQ,,,,N,0,0,,,2013-10-09 11:38,2013-11-11 11:35,admin,admin
9,82444,1296,10958,1422,1,0,N,N,N,CP_Phys,TT_Task,DT_FixedDUR2,RV_OK,TK_NotStart,BEW/MO/NC/1030,NOC for Contractors Camp,,0,0,63,0,0,0,63,0,0,0,,,,2013-07-21 07:00,2013-07-27 17:00,,2013-07-21 07:00,2013-07-27 17:00,2013-07-21 07:00,2013-07-27 17:00,2013-07-21 07:00,2013-07-27 17:00,,2013-07-21 07:00,2013-07-27 17:00,,PT_Normal,,,,,tzEXKHas9EasM5DXB55gCw,,,,Y,0,0,,,2013-10-09 11:38,2013-11-12 11:41,admin,admin
10,82445,1296,10958,1422,1,0,N,N,N,CP_Phys,TT_Task,DT_FixedDUR2,RV_OK,TK_NotStart,BEW/MO/NC/1040,NOC for Asphalt Plant Location,,890,171,189,0,0,0,189,0,0,0,,,,2013-10-27 16:00,2013-11-17 16:00,,2013-07-21 07:00,2013-08-10 17:00,2013-07-21 07:00,2013-08-10 17:00,2013-07-21 07:00,2013-08-10 17:00,,2013-10-27 16:00,2013-11-17 16:00,,PT_Normal,,,,,AePLxO+k6U2FjsudWqZUKA,,,,N,0,0,,,2013-10-09 11:38,2013-11-11 11:35,admin,admin
11,82446,1296,10972,1422,1,0,N,N,N,CP_Phys,TT_Task,DT_FixedDUR2,RV_OK,TK_NotStart,BEW/MO/EF/1000,Submission of Site Mobilization Drawings,,5267,0,45,0,0,0,45,0,0,0,,,,2015-02-26 09:00,2015-03-03 09:00,,2013-07-21 07:00,2013-07-25 17:00,2013-07-21 07:00,2013-07-25 17:00,2013-07-21 07:00,2013-07-25 17:00,,2015-02-26 09:00,2015-03-03 09:00,,PT_Normal,,,,,jzvdtzayg02M95/PJhFEaA,,,,N,0,0,,,2013-10-09 11:38,2013-11-11 22:09,admin,admin
12,82447,1296,10972,1422,1,0,N,N,N,CP_Phys,TT_Task,DT_FixedDUR2,RV_OK,TK_NotStart,BEW/MO/EF/1010,Mobilization of Enginners facilities Phase 1,,0,0,360,0,0,0,360,0,0,0,,,,2013-07-21 07:00,2013-08-29 17:00,,2013-07-21 07:00,2013-08-29 17:00,2013-07-21 07:00,2013-08-29 17:00,2013-07-21 07:00,2013-08-29 17:00,,2013-07-21 07:00,2013-08-29 17:00,,PT_Normal,,,,,TN7EFs/Pgku9fzwJViqi5g,,,,Y,0,0,,,2013-10-09 11:38,2013-11-12 11:41,admin,admin
13,82448,1296,10972,1422,1,0,N,N,N,CP_Phys,TT_Task,DT_FixedDUR2,RV_OK,TK_NotStart,BEW/MO/EF/1020,Mobilisation of Contractors facilities Phase 1,,0,0,360,0,0,0,360,0,0,0,,,,2013-07-21 07:00,2013-08-29 17:00,,2013-07-21 07:00,2013-08-29 17:00,2013-07-21 07:00,2013-08-29 17:00,2013-07-21 07:00,2013-08-29 17:00,,2013-07-21 07:00,2013-08-29 17:00,,PT_Normal,,,,,HdWTs4KAdUuZzIwP5pdiYA,,,,Y,0,0,,,2013-10-09 11:38,2013-11-12 11:41,admin,admin
14,82449,1296,10972,1422,1,0,N,N,N,CP_Phys,TT_Task,DT_FixedDUR2,RV_OK,TK_NotStart,BEW/MO/EF/1030,instalation of Borewells at various locations,,5339,763.5,189,0,0,0,189,0,0,0,,,,2015-03-01 09:00,2015-03-22 09:00,,2013-07-16 08:00,2013-08-05 17:00,2013-07-16 08:00,2013-08-05 17:00,2013-07-16 08:00,2013-08-05 17:00,,2015-03-01 09:00,2015-03-22 09:00,,PT_Normal,,,,,nlvEtkhBQUuSq5/kUi0xgA,,,,N,0,0,,,2013-10-09 11:38,2013-11-11 22:09,admin,admin
15,82450,1296,10967,1422,1,0,N,N,N,CP_Phys,TT_Task,DT_FixedDUR2,RV_OK,TK_NotStart,BEW/PR/FC/1020,Instalation of Project sign Board,2553,5015,439.5,108,0,324,72,108,0,0,0,,,,2015-03-10 09:00,2015-03-22 09:00,,2013-08-30 07:00,2013-09-10 17:00,2013-08-30 07:00,2013-09-10 17:00,2013-08-30 07:00,2013-09-10 17:00,,2015-03-10 09:00,2015-03-22 09:00,,PT_Normal,,,,,s4GIpole7k6E2fnXEh+tbQ,,,,N,0,0,,,2013-10-09 11:38,2013-11-12 18:18,admin,admin
16,82451,1296,10972,1422,1,0,N,N,N,CP_Drtn,TT_Task,DT_FixedDUR2,RV_OK,TK_NotStart,BEW/MO/EF/1040,Mobilisation of Site Laboratory Phase 1,,845.983333333333,18,360,0,0,0,360,0,0,0,,,,2013-10-22 16:59,2013-12-01 16:59,,2013-07-21 07:00,2013-08-29 17:00,2013-07-21 07:00,2013-08-29 17:00,2013-07-21 07:00,2013-08-29 17:00,,2013-10-22 16:59,2013-12-01 16:59,,PT_Normal,,,,,Wn9kUGw1gkq8naTSOcCx7Q,,,,N,0,0,,,2013-10-09 11:38,2013-11-12 10:59,admin,admin
17,82452,1296,10979,1423,1,0,N,N,N,CP_Phys,TT_Task,DT_FixedDUR2,RV_OK,TK_NotStart,BEW/DE/DS/1070,Survey Phase 1 Traversing and Centre Line Marking Loc 1,,684.5,0,225,0,0,0,225,0,0,0,,,,2013-12-19 16:00,2014-01-27 16:00,,2013-09-01 07:00,2013-10-03 16:30,2013-09-01 07:00,2013-10-03 16:30,2013-09-01 07:00,2013-10-03 16:30,,2013-12-19 16:00,2014-01-27 16:00,,PT_Normal,,,,,PkVuvHS3pku0mdP86RtkSQ,,,,N,0,0,,,2013-10-09 11:38,2013-11-12 11:41,admin,admin
18,82453,1296,10979,1423,1,0,N,N,N,CP_Phys,TT_Task,DT_FixedDUR2,RV_OK,TK_NotStart,BEW/DE/DS/1150,"Survey Phase 2 OGL recording 90+300 to 95+300, Traverse Loc 2",,1764.5,0,90,0,0,0,90,0,0,0,,,,2014-07-01 16:00,2014-07-15 16:00,,2013-09-19 16:30,2013-10-03 16:30,2013-09-19 16:30,2013-10-03 16:30,2013-09-19 16:30,2013-10-03 16:30,,2014-07-01 16:00,2014-07-15 16:00,,PT_Normal,,,,,hVfQQkZcFUuQeob7spfPKQ,,,,N,0,0,,,2013-10-09 11:38,2013-11-12 11:12,admin,admin
19,82454,1296,10967,1422,1,0,N,N,N,CP_Phys,TT_Task,DT_FixedDUR2,RV_OK,TK_NotStart,BEW/PR/FC/1030,Instalation of Asphalt Plant,2511,719,143.5,1125,0,3499.999999,144,1125,0,0,0,,,,2013-11-17 16:00,2014-03-22 16:00,,2013-08-30 07:00,2014-01-01 17:00,2013-08-30 07:00,2014-01-01 17:00,2013-08-30 07:00,2014-01-01 17:00,,2013-11-17 16:00,2014-03-22 16:00,,PT_Normal,,,,,uXCFzOUtN0OrGSUIt440NA,,,,N,0,0,,,2013-10-09 11:38,2013-11-12 18:20,admin,admin
20,82455,1296,10967,1423,1,0,N,N,N,CP_Phys,TT_Task,DT_FixedDUR2,RV_OK,TK_NotStart,BEW/PR/FC/1270,Instalation of Concrete Plant,2511,694.483333333333,0,720,0,2239.999999,180,720,0,0,0,,,,2013-12-22 16:59,2014-04-15 16:59,,2013-09-01 07:00,2013-12-25 15:30,2013-09-01 07:00,2013-12-25 15:30,2013-09-01 07:00,2013-12-25 15:30,,2013-12-22 16:59,2014-04-15 16:59,,PT_Normal,,,,,Vl9NWyLfN0ywkk+FEtQh7g,,,,N,0,0,,,2013-10-09 11:38,2013-11-12 18:19,admin,admin
21,82456,1296,10967,1423,1,0,N,N,N,CP_Phys,TT_Task,DT_FixedDUR2,RV_OK,TK_NotStart,BEW/PR/FC/1000,Instalation of Crusher and CABC Plant,2511,296.5,0,810,0,2519.999999,144,810,0,0,0,,,,2013-09-25 07:00,2014-02-05 16:00,,2013-08-11 08:00,2013-12-18 16:30,2013-08-11 08:00,2013-12-18 16:30,2013-08-11 08:00,2013-12-18 16:30,,2013-09-25 07:00,2014-02-05 16:00,,PT_Normal,,,,,iPRsqwbKH0uIGYusqb0ubQ,,,,N,0,0,,,2013-10-09 11:38,2013-11-12 18:19,admin,admin
22,82457,1296,10967,1423,1,0,N,N,N,CP_Phys,TT_Task,DT_FixedDUR2,RV_OK,TK_NotStart,BEW/PR/FC/1280,Making of Access Roads,,2323.5,317,540,0,540,36,540,0,0,0,,,,2014-09-14 07:00,2014-12-10 08:00,,2013-09-01 07:00,2013-11-27 15:30,2013-09-01 07:00,2013-11-27 15:30,2013-09-01 07:00,2013-11-27 15:30,,2014-09-14 07:00,2014-12-10 08:00,,PT_Normal,,,,,0TP/iUIGHE6QY4ohi+6+Vw,,,,N,0,0,,,2013-10-09 11:38,2013-11-12 18:18,admin,admin
23,82458,1296,10967,1423,1,0,N,N,N,CP_Phys,TT_Task,DT_FixedDUR2,RV_OK,TK_NotStart,BEW/PR/FC/1290,Mobilisation of Contractors facilities Phase 2,2553,2323.5,317,540,0,2160,441,540,0,0,0,,,,2014-09-14 07:00,2014-12-10 08:00,,2013-09-01 07:00,2013-11-27 15:30,2013-09-01 07:00,2013-11-27 15:30,2013-09-01 07:00,2013-11-27 15:30,,2014-09-14 07:00,2014-12-10 08:00,,PT_Normal,,,,,z6bfbqkEuEi/El5thxR8HQ,,,,N,0,0,,,2013-10-09 11:38,2013-11-12 18:19,admin,admin
24,82459,1296,10967,1423,1,0,N,N,N,CP_Drtn,TT_Task,DT_FixedDUR2,RV_OK,TK_NotStart,BEW/PR/FC/1300,Mobilisation of Site Laboratory Phase 2,2553,559.483333333333,0,405,0,1620,423,405,0,0,0,,,,2013-12-01 16:59,2014-02-04 16:59,,2013-09-01 07:00,2013-11-04 15:30,2013-09-01 07:00,2013-11-04 15:30,2013-09-01 07:00,2013-11-04 15:30,,2013-12-01 16:59,2014-02-04 16:59,,PT_Normal,,,,,cAcQq7Jf90qszx0se+5hbA,,,,N,0,0,,,2013-10-09 11:38,2013-11-12 18:18,admin,admin
25,82460,1296,10952,1422,1,0,N,N,N,CP_Phys,TT_Task,DT_FixedDUR2,RV_OK,TK_NotStart,BEW/DE/DS/1000,Approval of Soil Investigator,,3447,0,135,0,0,0,135,0,0,0,,,,2014-08-03 07:00,2014-08-17 17:00,,2013-07-16 08:00,2013-07-30 17:00,2013-07-16 08:00,2013-07-30 17:00,2013-07-16 08:00,2013-07-30 17:00,,2014-08-03 07:00,2014-08-17 17:00,,PT_Normal,,,,,CZ+NwwkavEuG7Ss0XOrIfg,,,,N,0,0,,,2013-10-09 11:38,2013-11-12 12:59,admin,admin
26,82461,1296,10952,1423,1,0,N,N,N,CP_Phys,TT_Task,DT_FixedDUR2,RV_OK,TK_NotStart,BEW/DE/DS/1130,Approval of Concrete Mix design,,559.483333333333,0,450,0,0,0,450,0,0,0,,,,2014-02-04 16:59,2014-04-15 16:59,,2013-11-04 15:30,2014-01-19 15:30,2013-11-04 15:30,2014-01-19 15:30,2013-11-04 15:30,2014-01-19 15:30,,2014-02-04 16:59,2014-04-15 16:59,,PT_Normal,,,,,nGWHqHmeLUSfREQOuLFhcQ,,,,N,0,0,,,2013-10-09 11:38,2013-11-12 10:59,admin,admin
27,82462,1296,10952,1423,1,0,N,N,N,CP_Phys,TT_Task,DT_FixedDUR2,RV_OK,TK_NotStart,BEW/DE/DS/1100,Approval of Reinforcement Steel,,3277.5,143,405,0,0,0,405,0,0,0,,,,2015-01-18 09:00,2015-03-22 09:00,,2013-07-31 07:00,2013-10-06 07:30,2013-07-31 07:00,2013-10-06 07:30,2013-07-31 07:00,2013-10-06 07:30,,2015-01-18 09:00,2015-03-22 09:00,,PT_Normal,,,,,hGv5yO+Sv0CdhAgpypwSsw,,,,N,0,0,,,2013-10-09 11:38,2013-11-12 12:59,admin,admin
28,82463,1296,10952,1423,1,0,N,N,N,CP_Phys,TT_Task,DT_FixedDUR2,RV_OK,TK_NotStart,BEW/DE/DS/1190,Approval of Bitumen Mix design,,395.5,0,270,0,0,0,270,0,0,0,,,,2014-02-20 16:00,2014-04-03 16:00,,2013-12-18 16:30,2014-02-02 16:30,2013-12-18 16:30,2014-02-02 16:30,2013-12-18 16:30,2014-02-02 16:30,,2014-02-20 16:00,2014-04-03 16:00,,PT_Normal,,,,,9FD6zn309UuXL5D+R8rn0g,,,,N,0,0,,,2013-10-09 11:38,2013-11-11 11:35,admin,admin
29,82464,1296,10952,1423,1,0,N,N,N,CP_Phys,TT_Task,DT_FixedDUR2,RV_OK,TK_NotStart,BEW/DE/DS/1010,Approval of Concrete Supplier and Mix Design,,3231.5,97,540,0,0,0,540,0,0,0,,,,2014-12-25 09:00,2015-03-22 09:00,,2013-07-16 08:00,2013-10-13 08:30,2013-07-16 08:00,2013-10-13 08:30,2013-07-16 08:00,2013-10-13 08:30,,2014-12-25 09:00,2015-03-22 09:00,,PT_Normal,,,,,dPo81WLH6k2QHpyqRBFPLQ,,,,N,0,0,,,2013-10-09 11:38,2013-11-11 22:09,admin,admin
30,82465,1296,10952,1423,1,0,N,N,N,CP_Phys,TT_Task,DT_FixedDUR2,RV_OK,TK_NotStart,BEW/DE/DS/1020,"Identification of Borrow Pit, testing of the material, Permission and approvals",,1852.5,269,675,0,0,0,675,0,0,0,,,,2014-05-12 16:00,2014-09-02 16:00,,2013-07-16 08:00,2013-11-06 07:30,2013-07-16 08:00,2013-11-06 07:30,2013-07-16 08:00,2013-11-06 07:30,,2014-05-12 16:00,2014-09-02 16:00,,PT_Normal,,,,,1ZGaZalcxEuB3YOqY62hMw,,,,N,0,0,,,2013-10-09 11:38,2013-11-09 15:19,admin,admin
31,82466,1296,10952,1423,1,0,N,N,N,CP_Phys,TT_Task,DT_FixedDUR2,RV_OK,TK_NotStart,BEW/DE/DS/1030,"Identification, finalisation of Expansion Joint, Inspection, testing and Material approval",,2006.5,0,1125,0,0,0,1125,0,0,0,,,,2014-06-08 07:00,2014-12-10 08:00,,2013-07-16 08:00,2014-01-20 07:30,2013-07-16 08:00,2014-01-20 07:30,2013-07-16 08:00,2014-01-20 07:30,,2014-06-08 07:00,2014-12-10 08:00,,PT_Normal,,,,,eb3kk9Fq1ES7tLOyQhbA9Q,,,,N,0,0,,,2013-10-09 11:38,2013-11-08 10:01,admin,admin
32,82467,1296,10952,1423,1,0,N,N,N,CP_Phys,TT_Task,DT_FixedDUR2,RV_OK,TK_NotStart,BEW/DE/DS/1040,"Identification, finalisation of Elastomeric Bering, Inspection, testing and Material approval",,2006.5,0,1125,0,0,0,1125,0,0,0,,,,2014-06-08 07:00,2014-12-10 08:00,,2013-07-16 08:00,2014-01-20 07:30,2013-07-16 08:00,2014-01-20 07:30,2013-07-16 08:00,2014-01-20 07:30,,2014-06-08 07:00,2014-12-10 08:00,,PT_Normal,,,,,a9VLGKGjzkutbdcjrjLgZw,,,,N,0,0,,,2013-10-09 11:38,2013-11-08 10:01,admin,admin
33,82468,1296,10952,1423,1,0,N,N,N,CP_Drtn,TT_Task,DT_FixedDUR2,RV_OK,TK_NotStart,BEW/DE/DS/1050,"Identification, finalisation of Spherical Bering, Inspection, testing and Material approval",,2006.5,0,1125,0,0,0,1125,0,0,0,,,,2014-06-08 07:00,2014-12-10 08:00,,2013-07-16 08:00,2014-01-20 07:30,2013-07-16 08:00,2014-01-20 07:30,2013-07-16 08:00,2014-01-20 07:30,,2014-06-08 07:00,2014-12-10 08:00,,PT_Normal,,,,,AF0GGmygX0+dGRw3raCfOA,,,,N,0,0,,,2013-10-09 11:38,2013-11-08 10:01,admin,admin
34,82469,1296,10959,1423,1,0,N,N,N,CP_Phys,TT_Task,DT_FixedDUR2,RV_OK,TK_NotStart,BEW/DE/DS/1080,Approval of Piling Methodology,,3565.5,0,126,0,0,0,126,0,0,0,,,,2015-03-02 09:00,2015-03-22 09:00,,2013-07-30 07:00,2013-08-21 08:00,2013-07-30 07:00,2013-08-21 08:00,2013-07-30 07:00,2013-08-21 08:00,,2015-03-02 09:00,2015-03-22 09:00,,PT_Normal,,,,,tYqPBMwPZUyWCnMRtDVJtw,,,,N,0,0,,,2013-10-09 11:38,2013-11-11 22:09,admin,admin
35,82470,1296,10959,1423,1,0,N,N,N,CP_Phys,TT_Task,DT_FixedDUR2,RV_OK,TK_NotStart,BEW/DE/DS/1090,Approval of MoS for Structural Excavation,,3565.5,431,126,0,0,0,126,0,0,0,,,,2015-03-02 09:00,2015-03-22 09:00,,2013-07-30 07:00,2013-08-21 08:00,2013-07-30 07:00,2013-08-21 08:00,2013-07-30 07:00,2013-08-21 08:00,,2015-03-02 09:00,2015-03-22 09:00,,PT_Normal,,,,,WralHUiz4Uy9APqMXki2ag,,,,N,0,0,,,2013-10-09 11:38,2013-11-11 22:09,admin,admin
36,82471,1296,10961,1423,1,0,N,N,N,CP_Phys,TT_Task,DT_FixedDUR2,RV_OK,TK_NotStart,BEW/DE/DS/1060,Approval of Drawing for the initial activities,,4525.5,0,189,0,0,0,189,0,0,0,,,,2015-07-26 07:00,2015-08-23 17:00,,2013-07-16 08:00,2013-08-19 09:00,2013-07-16 08:00,2013-08-19 09:00,2013-07-16 08:00,2013-08-19 09:00,,2015-07-26 07:00,2015-08-23 17:00,,PT_Normal,,,,,pSJpVttBOkCwym1zEdj76Q,,,,N,0,0,,,2013-10-09 11:38,2013-11-11 16:56,admin,admin
37,82472,1296,10961,1423,1,0,N,N,N,CP_Phys,TT_Task,DT_FixedDUR2,RV_OK,TK_NotStart,BEW/DE/DS/1160,Approval of Initial Cross sections,,918.5,0,189,0,0,0,189,0,0,0,,,,2014-03-04 16:00,2014-04-02 16:00,,2013-10-03 16:30,2013-11-06 15:30,2013-10-03 16:30,2013-11-06 15:30,2013-10-03 16:30,2013-11-06 15:30,,2014-03-04 16:00,2014-04-02 16:00,,PT_Normal,,,,,mRiolqe/LkaUGfr6qu1hkA,,,,N,0,0,,,2013-10-09 11:38,2013-11-12 11:41,admin,admin
38,82473,1296,10961,1423,1,0,N,N,N,CP_Phys,TT_Task,DT_FixedDUR2,RV_OK,TK_NotStart,BEW/DE/DS/1120,Approval of Initial Shop Drawings,,684.5,0,108,0,0,0,108,0,0,0,,,,2014-01-05 16:00,2014-01-22 16:00,,2013-09-15 07:00,2013-09-30 16:30,2013-09-15 07:00,2013-09-30 16:30,2013-09-15 07:00,2013-09-30 16:30,,2014-01-05 16:00,2014-01-22 16:00,,PT_Normal,,,,,yfjPz7HjZkGrzwwLXnQOyw,,,,N,0,0,,,2013-10-09 11:38,2013-11-12 11:10,admin,admin
39,82474,1296,10999,1423,1,0,N,N,N,CP_Phys,TT_Task,DT_FixedDUR2,RV_OK,TK_NotStart,BEW/ST/PL/2020,Instalation of Test Piles 22 Nos,2553,3134.5,0,108,0,969,144,108,107.777778,0,143.555556,,,,2015-03-22 09:00,2015-04-07 09:00,,2013-10-29 15:30,2013-11-17 15:30,2013-10-29 15:30,2013-11-17 15:30,2013-10-29 15:30,2013-11-17 15:30,,2015-03-22 09:00,2015-04-07 09:00,,PT_Normal,,,,,W1MBkR1cf0aZfk1q6I4Bvw,,,,N,0,0,,,2013-10-09 11:38,2013-11-12 10:04,admin,admin
40,82475,1296,10999,1423,1,0,N,N,N,CP_Phys,TT_Task,DT_FixedDUR2,RV_OK,TK_NotStart,BEW/ST/PL/2030,Testing the Piles 1-6,2511,3134.5,0,216,0,1620,90,216,0,0,0,,,,2015-04-07 09:00,2015-05-11 09:00,,2013-11-17 15:30,2013-12-22 15:30,2013-11-17 15:30,2013-12-22 15:30,2013-11-17 15:30,2013-12-22 15:30,,2015-04-07 09:00,2015-05-11 09:00,,PT_Normal,,,,,la38NjThxEKia3r2RjdxLw,,,,N,0,0,,,2013-10-09 11:38,2013-11-11 22:09,admin,admin
41,82476,1296,10994,1423,1,0,N,N,N,CP_Phys,TT_Task,DT_FixedDUR2,RV_OK,TK_NotStart,BEW/ST/PL/2040,Piling at Wadi Bridge 11,2553,4086.5,0,1008,0,4032,2142,1008,81,0,447.999996,,,,2016-03-03 07:00,2016-08-14 17:00,,2014-05-11 15:30,2014-10-26 16:30,2014-05-11 15:30,2014-10-26 16:30,2014-05-11 15:30,2014-10-26 16:30,,2016-03-03 07:00,2016-08-14 17:00,,PT_Normal,,,,,qiccEt8j+UWl4dfxJB3WhQ,,,,N,0,0,,,2013-10-09 11:38,2013-11-12 10:36,admin,admin
42,82477,1296,10994,1423,1,0,N,N,N,CP_Phys,TT_Task,DT_FixedDUR2,RV_OK,TK_NotStart,BEW/ST/PL/2060,Piling at Wadi Bridge  12,2553,4212.5,0,1080,0,4320,2286,1080,81,0,479.999996,,,,2016-02-22 07:00,2016-08-14 17:00,,2014-04-09 15:30,2014-10-02 15:30,2014-04-09 15:30,2014-10-02 15:30,2014-04-09 15:30,2014-10-02 15:30,,2016-02-22 07:00,2016-08-14 17:00,,PT_Normal,,,,,H4H83IIh6k69LrpLS3qsew,,,,N,0,0,,,2013-10-09 11:38,2013-11-12 10:36,admin,admin
43,82478,1296,10994,1423,1,0,N,N,N,CP_Phys,TT_Task,DT_FixedDUR2,RV_OK,TK_NotStart,BEW/ST/PL/2260,Piling at Wadi Bridge  13,2553,4086.5,0,882,0,3528,1890,882,81,0,391.999996,,,,2015-10-15 07:00,2016-03-02 17:00,,2013-12-22 15:30,2014-05-11 15:30,2013-12-22 15:30,2014-05-11 15:30,2013-12-22 15:30,2014-05-11 15:30,,2015-10-15 07:00,2016-03-02 17:00,,PT_Normal,,,,,CEF/DW0sC0mKqviKN1VtVA,,,,N,0,0,,,2013-10-09 11:38,2013-11-12 10:36,admin,admin
44,82479,1296,10994,1423,1,0,N,N,N,CP_Phys,TT_Task,DT_FixedDUR2,RV_OK,TK_NotStart,BEW/ST/PL/2340,Piling at Wadi Bridge  14,2553,3782.5,0,684,0,2736,1494,684,81,0,303.999996,,,,2015-08-27 09:00,2015-12-15 09:00,,2013-12-22 15:30,2014-04-09 15:30,2013-12-22 15:30,2014-04-09 15:30,2013-12-22 15:30,2014-04-09 15:30,,2015-08-27 09:00,2015-12-15 09:00,,PT_Normal,,,,,Fv9tBPFfBEaAqAiw85TE/w,,,,N,0,0,,,2013-10-09 11:38,2013-11-12 10:36,admin,admin
45,82480,1296,10994,1423,1,0,N,N,N,CP_Phys,TT_Task,DT_FixedDUR2,RV_OK,TK_NotStart,BEW/ST/PL/2080,Piling at Interchange 10,2553,3134.5,0,261,0,1044,648,261,103,0,116,,,,2015-06-21 09:00,2015-08-02 09:00,,2014-01-27 15:30,2014-03-09 15:30,2014-01-27 15:30,2014-03-09 15:30,2014-01-27 15:30,2014-03-09 15:30,,2015-06-21 09:00,2015-08-02 09:00,,PT_Normal,,,,,fiLr6t9kVEm9X0mmOcQJsw,,,,N,0,0,,,2013-10-09 11:38,2013-11-12 10:36,admin,admin
46,82481,1296,10994,1423,1,0,N,N,N,CP_Phys,TT_Task,DT_FixedDUR2,RV_OK,TK_NotStart,BEW/ST/PL/2120,Piling at Overpass  14,2553,3210.5,0,126,0,504,378,126,59,0,56,,,,2015-08-12 14:00,2015-09-01 14:00,,2014-03-09 15:30,2014-03-27 15:30,2014-03-09 15:30,2014-03-27 15:30,2014-03-09 15:30,2014-03-27 15:30,,2015-08-12 14:00,2015-09-01 14:00,,PT_Normal,,,,,uWOymUg3FUqe+ySlccr+5Q,,,,N,0,0,,,2013-10-09 11:38,2013-11-12 10:36,admin,admin
47,82482,1296,10994,1423,1,0,N,N,N,CP_Phys,TT_Task,DT_FixedDUR2,RV_OK,TK_NotStart,BEW/ST/PL/2170,Piling at Overpass  11,2553,4023.5,0,126,0,504,378,126,64,0,56,,,,2016-02-21 07:00,2016-03-09 17:00,,2014-05-07 15:30,2014-05-28 15:30,2014-05-07 15:30,2014-05-28 15:30,2014-05-07 15:30,2014-05-28 15:30,,2016-02-21 07:00,2016-03-09 17:00,,PT_Normal,,,,,gM24Wbzz8kuPwAsE6o7NBA,,,,N,0,0,,,2013-10-09 11:38,2013-11-12 10:36,admin,admin
48,82483,1296,10994,1423,1,0,N,N,N,CP_Phys,TT_Task,DT_FixedDUR2,RV_OK,TK_NotStart,BEW/ST/PL/2150,Piling at Interchange 08,2553,4023.5,0,261,0,1044,648,261,103,0,116,,,,2016-01-11 07:00,2016-02-18 17:00,,2014-03-27 15:30,2014-05-07 15:30,2014-03-27 15:30,2014-05-07 15:30,2014-03-27 15:30,2014-05-07 15:30,,2016-01-11 07:00,2016-02-18 17:00,,PT_Normal,,,,,8fmbGoP1P0+F7JW9E71K3A,,,,N,0,0,,,2013-10-09 11:38,2013-11-12 10:30,admin,admin
49,82484,1296,10994,1423,1,0,N,N,N,CP_Phys,TT_Task,DT_FixedDUR2,RV_OK,TK_NotStart,BEW/ST/PL/2210,Piling at Interchange 09,2553,4023.5,0,153,0,612,432,153,78,0,68,,,,2016-03-10 07:00,2016-04-03 17:00,,2014-05-28 15:30,2014-06-22 15:30,2014-05-28 15:30,2014-06-22 15:30,2014-05-28 15:30,2014-06-22 15:30,,2016-03-10 07:00,2016-04-03 17:00,,PT_Normal,,,,,Hn9FbnTBtE6jv8KW7E6Dug,,,,N,0,0,,,2013-10-09 11:38,2013-11-12 10:30,admin,admin
50,82485,1296,10994,1423,1,0,N,N,N,CP_Phys,TT_Task,DT_FixedDUR2,RV_OK,TK_NotStart,BEW/ST/PL/2230,Piling at Overpass  12,2553,4023.5,0,126,0,504,378,126,59,0,56,,,,2016-05-18 07:00,2016-06-06 17:00,,2014-08-11 15:30,2014-08-31 15:30,2014-08-11 15:30,2014-08-31 15:30,2014-08-11 15:30,2014-08-31 15:30,,2016-05-18 07:00,2016-06-06 17:00,,PT_Normal,,,,,cx3mzvdMkEmKhSDuEcO4Wg,,,,N,0,0,,,2013-10-09 11:38,2013-11-12 10:36,admin,admin
51,82486,1296,10994,1423,1,0,N,N,N,CP_Phys,TT_Task,DT_FixedDUR2,RV_OK,TK_NotStart,BEW/ST/PL/2270,Piling at Interchange  11,2553,4023.5,0,153,0,612,432,153,78,0,68,,,,2016-04-24 07:00,2016-05-17 17:00,,2014-07-10 15:30,2014-08-11 15:30,2014-07-10 15:30,2014-08-11 15:30,2014-07-10 15:30,2014-08-11 15:30,,2016-04-24 07:00,2016-05-17 17:00,,PT_Normal,,,,,dPCtsLLN8E2XaRzguRONGw,,,,N,0,0,,,2013-10-09 11:38,2013-11-12 10:30,admin,admin
52,82487,1296,10994,1423,1,0,N,N,N,CP_Phys,TT_Task,DT_FixedDUR2,RV_OK,TK_NotStart,BEW/ST/PL/2300,Piling at Interchange  12,2553,4023.5,0,153,0,612,432,153,78,0,68,,,,2016-06-07 07:00,2016-06-29 17:00,,2014-08-31 15:30,2014-09-23 15:30,2014-08-31 15:30,2014-09-23 15:30,2014-08-31 15:30,2014-09-23 15:30,,2016-06-07 07:00,2016-06-29 17:00,,PT_Normal,,,,,XLHQNgSuMEO6XsJFlP7t3A,,,,N,0,0,,,2013-10-09 11:38,2013-11-12 10:30,admin,admin
53,82488,1296,10995,1423,1,0,N,N,N,CP_Phys,TT_Task,DT_FixedDUR2,RV_OK,TK_NotStart,BEW/ST/PL/2100,Pile testing at Wadi Bridge  11,,4086.5,4086.5,738,0,0,0,738,0,0,0,,,,2016-04-28 07:00,2016-08-28 17:00,,2014-07-07 15:30,2014-11-09 16:30,2014-07-07 15:30,2014-11-09 16:30,2014-07-07 15:30,2014-11-09 16:30,,2016-04-28 07:00,2016-08-28 17:00,,PT_Normal,,,,,SLP/hjhdcUqo+x3XBqFNYA,,,,N,0,0,,,2013-10-09 11:38,2013-11-11 16:56,admin,admin
54,82489,1296,10995,1423,1,0,N,N,N,CP_Phys,TT_Task,DT_FixedDUR2,RV_OK,TK_NotStart,BEW/ST/PL/2140,Pile testing at Wadi Bridge  12,,4212.5,4212.5,810,0,0,0,810,0,0,0,,,,2016-04-18 07:00,2016-08-28 17:00,,2014-06-05 15:30,2014-10-20 16:30,2014-06-05 15:30,2014-10-20 16:30,2014-06-05 15:30,2014-10-20 16:30,,2016-04-18 07:00,2016-08-28 17:00,,PT_Normal,,,,,00fgsJqDMEKDnrpRQysQPw,,,,N,0,0,,,2013-10-09 11:38,2013-11-11 16:19,admin,admin
55,82490,1296,10995,1423,1,0,N,N,N,CP_Phys,TT_Task,DT_FixedDUR2,RV_OK,TK_NotStart,BEW/ST/PL/2350,Pile testing at Wadi Bridge  13,,5094.5,5094.5,612,0,0,0,612,0,0,0,,,,2016-05-19 07:00,2016-08-28 17:00,,2014-02-18 15:30,2014-05-26 15:30,2014-02-18 15:30,2014-05-26 15:30,2014-02-18 15:30,2014-05-26 15:30,,2016-05-19 07:00,2016-08-28 17:00,,PT_Normal,,,,,JuziSlEcLU+yNd2ufU723A,,,,N,0,0,,,2013-10-09 11:38,2013-11-09 23:22,admin,admin
56,82491,1296,10995,1423,1,0,N,N,N,CP_Phys,TT_Task,DT_FixedDUR2,RV_OK,TK_NotStart,BEW/ST/PL/2390,Pile testing at Wadi Bridge  14,,3782.5,0,414,0,0,0,414,0,0,0,,,,2015-10-25 09:00,2015-12-30 09:00,,2014-02-18 15:30,2014-04-23 15:30,2014-02-18 15:30,2014-04-23 15:30,2014-02-18 15:30,2014-04-23 15:30,,2015-10-25 09:00,2015-12-30 09:00,,PT_Normal,,,,,Wwu5Ke0h0UC1g7GnDZ3UlQ,,,,N,0,0,,,2013-10-09 11:38,2013-11-11 16:19,admin,admin
57,82492,1296,10995,1423,1,0,N,N,N,CP_Phys,TT_Task,DT_FixedDUR2,RV_OK,TK_NotStart,BEW/ST/PL/2160,Pile testing at Interchange 10,,3134.5,0,90,0,0,0,90,0,0,0,,,,2015-08-03 09:00,2015-08-17 09:00,,2014-03-10 15:30,2014-03-24 15:30,2014-03-10 15:30,2014-03-24 15:30,2014-03-10 15:30,2014-03-24 15:30,,2015-08-03 09:00,2015-08-17 09:00,,PT_Normal,,,,,KTQ6E4cVGE2m1TEfi8OuJQ,,,,N,0,0,,,2013-10-09 11:38,2013-11-11 22:09,admin,admin
58,82493,1296,10995,1423,1,0,N,N,N,CP_Phys,TT_Task,DT_FixedDUR2,RV_OK,TK_NotStart,BEW/ST/PL/2200,Pile testing at Overpass 14,,4509.5,36,90,0,0,0,90,0,0,0,,,,2016-04-18 07:00,2016-05-01 17:00,,2014-04-20 15:30,2014-05-04 15:30,2014-04-20 15:30,2014-05-04 15:30,2014-04-20 15:30,2014-05-04 15:30,,2016-04-18 07:00,2016-05-01 17:00,,PT_Normal,,,,,pu//P3XvTki3Fx30Xv1zPg,,,,N,0,0,,,2013-10-09 11:38,2013-11-11 17:01,admin,admin
59,82494,1296,10995,1423,1,0,N,N,N,CP_Phys,TT_Task,DT_FixedDUR2,RV_OK,TK_NotStart,BEW/ST/PL/2240,Pile testing at Overpass 11,,4302.5,36,90,0,0,0,90,0,0,0,,,,2016-05-17 07:00,2016-05-30 17:00,,2014-06-19 15:30,2014-07-03 15:30,2014-06-19 15:30,2014-07-03 15:30,2014-06-19 15:30,2014-07-03 15:30,,2016-05-17 07:00,2016-05-30 17:00,,PT_Normal,,,,,mWSTVAP/FE6uBwKGiMXu3Q,,,,N,0,0,,,2013-10-09 11:38,2013-11-11 17:01,admin,admin
60,82495,1296,10995,1423,1,0,N,N,N,CP_Phys,TT_Task,DT_FixedDUR2,RV_OK,TK_NotStart,BEW/ST/PL/2220,Pile testing at Interchange 08,,4473.5,171,90,0,0,0,90,0,0,0,,,,2016-05-02 07:00,2016-05-16 17:00,,2014-05-08 15:30,2014-05-22 15:30,2014-05-08 15:30,2014-05-22 15:30,2014-05-08 15:30,2014-05-22 15:30,,2016-05-02 07:00,2016-05-16 17:00,,PT_Normal,,,,,ZBmBYt53fkurNqZSBE3QIg,,,,N,0,0,,,2013-10-09 11:38,2013-11-11 17:01,admin,admin
61,82496,1296,10995,1423,1,0,N,N,N,CP_Phys,TT_Task,DT_FixedDUR2,RV_OK,TK_NotStart,BEW/ST/PL/2290,Pile testing at Interchange 09,,4266.5,0,90,0,0,0,90,0,0,0,,,,2016-05-31 07:00,2016-06-13 17:00,,2014-07-09 15:30,2014-07-24 15:30,2014-07-09 15:30,2014-07-24 15:30,2014-07-09 15:30,2014-07-24 15:30,,2016-05-31 07:00,2016-06-13 17:00,,PT_Normal,,,,,Tg13E2+mdkakk2UXN7fbKg,,,,N,0,0,,,2013-10-09 11:38,2013-11-11 17:01,admin,admin
62,82497,1296,10995,1423,1,0,N,N,N,CP_Phys,TT_Task,DT_FixedDUR2,RV_OK,TK_NotStart,BEW/ST/PL/2310,Pile testing at Overpass 10,,4266.5,99,90,0,0,0,90,0,0,0,,,,2016-06-14 07:00,2016-06-27 17:00,,2014-07-24 15:30,2014-08-13 15:30,2014-07-24 15:30,2014-08-13 15:30,2014-07-24 15:30,2014-08-13 15:30,,2016-06-14 07:00,2016-06-27 17:00,,PT_Normal,,,,,WpJIYlgYkkuhvL9WLxfQ8A,,,,N,0,0,,,2013-10-09 11:38,2013-11-11 17:01,admin,admin
63,82498,1296,10995,1423,1,0,N,N,N,CP_Phys,TT_Task,DT_FixedDUR2,RV_OK,TK_NotStart,BEW/ST/PL/2330,Pile testing at Interchange 11,,4167.5,45,90,0,0,0,90,0,0,0,,,,2016-06-28 07:00,2016-07-17 17:00,,2014-08-28 15:30,2014-09-11 15:30,2014-08-28 15:30,2014-09-11 15:30,2014-08-28 15:30,2014-09-11 15:30,,2016-06-28 07:00,2016-07-17 17:00,,PT_Normal,,,,,FeZSRefZnEqOAEwLtpVrIw,,,,N,0,0,,,2013-10-09 11:38,2013-11-11 17:01,admin,admin
64,82499,1296,10995,1423,1,0,N,N,N,CP_Phys,TT_Task,DT_FixedDUR2,RV_OK,TK_NotStart,BEW/ST/PL/2370,Pile testing at Interchange 12,,4068.5,162,90,0,0,0,90,0,0,0,,,,2016-08-01 07:00,2016-08-14 17:00,,2014-10-14 16:30,2014-10-28 16:30,2014-10-14 16:30,2014-10-28 16:30,2014-10-14 16:30,2014-10-28 16:30,,2016-08-01 07:00,2016-08-14 17:00,,PT_Normal,,,,,suZGAApUiEmJ2E+nscAGiQ,,,,N,0,0,,,2013-10-09 11:38,2013-11-11 17:01,admin,admin
65,82500,1296,10957,1423,1,0,N,N,N,CP_Phys,TT_Task,DT_FixedDUR2,RV_OK,TK_NotStart,BEW/ST/MS/2000,Casting of panels for 'Mechanically Stabilized Earth Retaining Wall',,2124.5,385,3510,0,0,0,3510,0,0,0,,,,2015-02-10 07:00,2016-08-28 17:00,,2014-03-02 15:30,2015-09-21 16:30,2014-03-02 15:30,2015-09-21 16:30,2014-03-02 15:30,2015-09-21 16:30,,2015-02-10 07:00,2016-08-28 17:00,,PT_Normal,,,,,UgX4qsGjD0++6uWv4xEMKA,,,,N,0,0,,,2013-10-09 11:38,2013-11-08 12:25,admin,admin
66,82501,1296,11245,1423,1,0,N,N,N,CP_Phys,TT_Task,DT_FixedDUR2,RV_OK,TK_NotStart,BEW/ST/IC10/1010,PCC & Pile Head Breaking,2553,3134.5,0,54,0,64,72,54,0,0,0,,,,2015-08-23 14:00,2015-08-31 14:00,,2014-03-31 09:30,2014-04-08 09:30,2014-03-31 09:30,2014-04-08 09:30,2014-03-31 09:30,2014-04-08 09:30,,2015-08-23 14:00,2015-08-31 14:00,,PT_Normal,,,,,uvEg5VlPrk2oPadOdR6T3A,,,,N,0,0,,,2013-10-09 11:38,2013-11-12 10:47,admin,admin
67,82502,1296,11245,1423,1,0,N,N,N,CP_Phys,TT_Task,DT_FixedDUR2,RV_OK,TK_NotStart,BEW/ST/IC10/1020,Concreting for Pile Cap / Abutment Foundation,2511,3425.5,0,81,0,252,144,81,18,0,162,,,,2015-10-18 07:00,2015-10-28 17:00,,2014-04-08 09:30,2014-04-21 09:30,2014-04-08 09:30,2014-04-21 09:30,2014-04-08 09:30,2014-04-21 09:30,,2015-10-18 07:00,2015-10-28 17:00,,PT_Normal,,,,,TipHW8eOnkOfd7JpLQStDg,,,,N,0,0,,,2013-10-09 11:38,2013-11-11 17:00,admin,admin
68,82503,1296,11245,1423,1,0,N,N,N,CP_Phys,TT_Task,DT_FixedDUR2,RV_OK,TK_NotStart,BEW/ST/IC10/1070,Conceting including Formwork & Reinforcement fixing for Abutment,2511,3425.5,188,126,0,392,144,126,18,0,252,,,,2015-10-29 07:00,2015-11-17 17:00,,2014-04-21 09:30,2014-05-11 09:30,2014-04-21 09:30,2014-05-11 09:30,2014-04-21 09:30,2014-05-11 09:30,,2015-10-29 07:00,2015-11-17 17:00,,PT_Normal,,,,,vLEc7DtwVk2Mb8cwotq3qQ,,,,N,0,0,,,2013-10-09 11:38,2013-11-11 17:00,admin,admin
69,82504,1296,11436,1423,1,0,N,N,N,CP_Phys,TT_Task,DT_FixedDUR2,RV_OK,TK_NotStart,BEW/ST/IC10/1340,Staging For girder,2511,3237.5,0,126,0,392,270,126,72000,0,126,,,,2015-11-19 07:00,2015-12-08 17:00,,2014-06-10 08:30,2014-06-30 08:30,2014-06-10 08:30,2014-06-30 08:30,2014-06-10 08:30,2014-06-30 08:30,,2015-11-19 07:00,2015-12-08 17:00,,PT_Normal,,,,,dGwiRwrbykamWzKWRHoRSQ,,,,N,0,0,,,2013-10-09 11:38,2013-11-11 17:00,admin,admin
70,82505,1296,11436,1423,1,0,N,N,N,CP_Phys,TT_Task,DT_FixedDUR2,RV_OK,TK_NotStart,BEW/ST/IC10/1400,Fixing of the Bearing,2511,3327.5,90,36,0,4,108,36,0,0,0,,,,2015-12-24 07:00,2015-12-29 17:00,,2014-06-30 08:30,2014-07-06 08:30,2014-06-30 08:30,2014-07-06 08:30,2014-06-30 08:30,2014-07-06 08:30,,2015-12-24 07:00,2015-12-29 17:00,,PT_Normal,,,,,pFGy10DwzkmaQKzDX7uIrg,,,,N,0,0,,,2013-10-09 11:38,2013-11-11 17:00,admin,admin
71,82506,1296,11436,1423,1,0,N,N,N,CP_Phys,TT_Task,DT_FixedDUR2,RV_OK,TK_NotStart,BEW/ST/IC10/1410,Bottom Formwork along with Sides of Box Girder,2511,3237.5,0,126,0,14,72,126,23,0,140,,,,2015-12-09 07:00,2015-12-29 17:00,,2014-06-30 08:30,2014-07-20 08:30,2014-06-30 08:30,2014-07-20 08:30,2014-06-30 08:30,2014-07-20 08:30,,2015-12-09 07:00,2015-12-29 17:00,,PT_Normal,,,,,BJVgI1x3E0aQWUq084x3Dg,,,,N,0,0,,,2013-10-09 11:38,2013-11-11 22:56,admin,admin
72,82507,1296,11436,1423,1,0,N,N,N,CP_Phys,TT_Task,DT_FixedDUR2,RV_OK,TK_NotStart,BEW/ST/IC10/1470,Reinforcement Fixing for Base & Sides of Box Girder,2511,3237.5,0,126,0,392,270,126,9,0,14,,,,2015-12-30 07:00,2016-01-18 17:00,,2014-07-20 08:30,2014-08-14 08:30,2014-07-20 08:30,2014-08-14 08:30,2014-07-20 08:30,2014-08-14 08:30,,2015-12-30 07:00,2016-01-18 17:00,,PT_Normal,,,,,bAdfWcoVMkOzWmw99eF0yQ,,,,N,0,0,,,2013-10-09 11:38,2013-11-12 10:30,admin,admin
73,82508,1296,11436,1423,1,0,N,N,N,CP_Phys,TT_Task,DT_FixedDUR2,RV_OK,TK_NotStart,BEW/ST/IC10/1520,Formwork for Inner Sides & Wall,2511,3237.5,0,126,0,392,270,126,23,0,140,,,,2016-01-19 07:00,2016-02-07 17:00,,2014-08-14 08:30,2014-09-03 08:30,2014-08-14 08:30,2014-09-03 08:30,2014-08-14 08:30,2014-09-03 08:30,,2016-01-19 07:00,2016-02-07 17:00,,PT_Normal,,,,,yezv+ecfSkW5X0rANwJ4Gg,,,,N,0,0,,,2013-10-09 11:38,2013-11-11 17:00,admin,admin
74,82509,1296,11436,1423,1,0,N,N,N,CP_Phys,TT_Task,DT_FixedDUR2,RV_OK,TK_NotStart,BEW/ST/IC10/1560,Reinforcement fixing at Sides,2511,3237.5,0,126,0,392,270,126,18,0,140,,,,2016-02-08 07:00,2016-02-25 17:00,,2014-09-03 08:30,2014-09-23 08:30,2014-09-03 08:30,2014-09-23 08:30,2014-09-03 08:30,2014-09-23 08:30,,2016-02-08 07:00,2016-02-25 17:00,,PT_Normal,,,,,+xPZNMhfSkK16Bn2Gkmbrg,,,,N,0,0,,,2013-10-09 11:38,2013-11-12 10:30,admin,admin
75,82510,1296,11436,1423,1,0,N,N,N,CP_Phys,TT_Task,DT_FixedDUR2,RV_OK,TK_NotStart,BEW/ST/IC10/1590,Concreting at sides,2511,3237.5,0,9,0,28,270,9,9,0,9,,,,2016-02-28 07:00,2016-02-28 17:00,,2014-09-23 08:30,2014-09-24 08:30,2014-09-23 08:30,2014-09-24 08:30,2014-09-23 08:30,2014-09-24 08:30,,2016-02-28 07:00,2016-02-28 17:00,,PT_Normal,,,,,6kfPJ/Qcv0ehZoFMvB26Mg,,,,N,0,0,,,2013-10-09 11:38,2013-11-11 17:00,admin,admin
76,82511,1296,11437,1423,1,0,N,N,N,CP_Phys,TT_Task,DT_FixedDUR2,RV_OK,TK_NotStart,BEW/ST/IC10/1620,Shuttering of Top Slab,2511,3237.5,0,135,0,420,270,135,18,0,150,,,,2016-03-03 07:00,2016-03-23 17:00,,2014-09-29 08:30,2014-10-22 09:30,2014-09-29 08:30,2014-10-22 09:30,2014-09-29 08:30,2014-10-22 09:30,,2016-03-03 07:00,2016-03-23 17:00,,PT_Normal,,,,,XRMr8gLo+0itNI6uK8bnCg,,,,N,0,0,,,2013-10-09 11:38,2013-11-12 10:30,admin,admin
77,82512,1296,11437,1423,1,0,N,N,N,CP_Phys,TT_Task,DT_FixedDUR2,RV_OK,TK_NotStart,BEW/ST/IC10/1640,Reinforcement fixing for Top Slab,2511,3237.5,0,126,0,392,270,126,18,0,140,,,,2016-03-13 07:00,2016-03-30 17:00,,2014-10-09 09:30,2014-10-29 09:30,2014-10-09 09:30,2014-10-29 09:30,2014-10-09 09:30,2014-10-29 09:30,,2016-03-13 07:00,2016-03-30 17:00,,PT_Normal,,,,,u08aL46HMkiZ+DOKPlpsmg,,,,N,0,0,,,2013-10-09 11:38,2013-11-12 10:30,admin,admin
78,82513,1296,11437,1423,1,0,N,N,N,CP_Phys,TT_Task,DT_FixedDUR2,RV_OK,TK_NotStart,BEW/ST/IC10/1700,Concreting of Top Slab,2511,3237.5,0,9,0,28,270,9,18,0,10,,,,2016-03-31 07:00,2016-03-31 17:00,,2014-10-29 09:30,2014-10-30 09:30,2014-10-29 09:30,2014-10-30 09:30,2014-10-29 09:30,2014-10-30 09:30,,2016-03-31 07:00,2016-03-31 17:00,,PT_Normal,,,,,ru43jOnlKUqQmQUQfqSR3A,,,,N,0,0,,,2013-10-09 11:38,2013-11-12 10:28,admin,admin
79,82514,1296,11437,1423,1,0,N,N,N,CP_Phys,TT_Task,DT_FixedDUR2,RV_OK,TK_NotStart,BEW/ST/IC10/1730,Removal of Staging,2511,3237.5,0,54,0,168,270,54,9,0,6,,,,2016-04-17 07:00,2016-04-24 17:00,,2014-11-13 09:30,2014-11-24 09:30,2014-11-13 09:30,2014-11-24 09:30,2014-11-13 09:30,2014-11-24 09:30,,2016-04-17 07:00,2016-04-24 17:00,,PT_Normal,,,,,jFk3CTtdQEK1GO95Qnbc6g,,,,N,0,0,,,2013-10-09 11:38,2013-11-12 10:30,admin,admin
80,82515,1296,11437,1423,1,0,N,N,N,CP_Phys,TT_Task,DT_FixedDUR2,RV_OK,TK_NotStart,BEW/ST/IC10/1750,Miscellaneous Works,2511,3237.5,103,90,0,280,270,90,0,0,0,,,,2016-04-25 07:00,2016-05-09 17:00,,2014-11-24 09:30,2014-12-08 09:30,2014-11-24 09:30,2014-12-08 09:30,2014-11-24 09:30,2014-12-08 09:30,,2016-04-25 07:00,2016-05-09 17:00,,PT_Normal,,,,,f+BoD/qs0UuSL9Sgf43q6A,,,,N,0,0,,,2013-10-09 11:38,2013-11-11 22:09,admin,admin
81,82516,1296,11460,1423,1,0,N,N,N,CP_Phys,TT_Task,DT_FixedDUR2,RV_OK,TK_NotStart,BEW/ST/IC10/1710,Stressing of the Structure including Grouting,2553,3237.5,0,45,0,180,270,45,9,0,45,,,,2016-04-10 07:00,2016-04-14 17:00,,2014-11-06 09:30,2014-11-13 09:30,2014-11-06 09:30,2014-11-13 09:30,2014-11-06 09:30,2014-11-13 09:30,,2016-04-10 07:00,2016-04-14 17:00,,PT_Normal,,,,,HHkxNnle8k+Nv9XGERhu6A,,,,N,0,0,,,2013-10-09 11:38,2013-11-11 17:00,admin,admin
82,82517,1296,11053,1423,1,0,N,N,N,CP_Phys,TT_Task,DT_FixedDUR2,RV_OK,TK_NotStart,BEW/ST/IC10/1190,Excavation for MSE Wall - RHS,2553,3598.5,0,36,0,54,45,36,9,0,36,,,,2015-12-20 13:00,2015-12-27 12:00,,2014-05-13 13:30,2014-05-19 13:30,2014-05-13 13:30,2014-05-19 13:30,2014-05-13 13:30,2014-05-19 13:30,,2015-12-20 13:00,2015-12-27 12:00,,PT_Normal,,,,,4khHa4ZUm0SXqRZORWJnpg,,,,N,0,0,,,2013-10-09 11:38,2013-11-11 16:49,admin,admin
83,82518,1296,11053,1423,1,0,N,N,N,CP_Phys,TT_Task,DT_FixedDUR2,RV_OK,TK_NotStart,BEW/ST/IC10/1210,Foundation For MSE Wall including Blinding RHS,2553,3854.5,0,108,0,432,180,108,18,0,216,,,,2016-02-04 07:00,2016-02-21 17:00,,2014-05-19 13:30,2014-06-05 13:30,2014-05-19 13:30,2014-06-05 13:30,2014-05-19 13:30,2014-06-05 13:30,,2016-02-04 07:00,2016-02-21 17:00,,PT_Normal,,,,,e6o1VOTejUiWn0yK0QhVRw,,,,N,0,0,,,2013-10-09 11:38,2013-11-11 16:49,admin,admin
84,82519,1296,11053,1423,1,0,N,N,N,CP_Phys,TT_Task,DT_FixedDUR2,RV_OK,TK_NotStart,BEW/ST/IC10/1310,Fixing of MSE Walls Pannels RHS,2553,3854.5,0,216,0,648,126,216,18,0,24,,,,2016-02-22 07:00,2016-03-24 17:00,,2014-06-05 13:30,2014-07-09 13:30,2014-06-05 13:30,2014-07-09 13:30,2014-06-05 13:30,2014-07-09 13:30,,2016-02-22 07:00,2016-03-24 17:00,,PT_Normal,,,,,k+jXHyGCYkC63yF0uf8foA,,,,N,0,0,,,2013-10-09 11:38,2013-11-11 16:49,admin,admin
85,82520,1296,11053,1423,1,0,N,N,N,CP_Phys,TT_Task,DT_FixedDUR2,RV_OK,TK_NotStart,BEW/ST/IC10/1320,Earth filling & Embankment Preparation RHS,2553,3854.5,0,189,0,378,90,189,72,0,756,,,,2016-02-22 07:00,2016-03-21 17:00,,2014-06-05 13:30,2014-07-06 13:30,2014-06-05 13:30,2014-07-06 13:30,2014-06-05 13:30,2014-07-06 13:30,,2016-02-22 07:00,2016-03-21 17:00,,PT_Normal,,,,,Eh5br7yB9UOELMUw8JfNrQ,,,,N,0,0,,,2013-10-09 11:38,2013-11-12 09:52,admin,admin
86,82521,1296,11053,1423,1,0,N,N,N,CP_Phys,TT_Task,DT_FixedDUR2,RV_OK,TK_NotStart,BEW/ST/IC10/1420,Granular Sub-Base RHS,2553,3854.5,0,135,0,270,72,135,63,0,180,,,,2016-03-22 07:00,2016-04-11 17:00,,2014-07-06 13:30,2014-08-03 13:30,2014-07-06 13:30,2014-08-03 13:30,2014-07-06 13:30,2014-08-03 13:30,,2016-03-22 07:00,2016-04-11 17:00,,PT_Normal,,,,,S8cNJQDjikGvqpVekCDczQ,,,,N,0,0,,,2013-10-09 11:38,2013-11-11 23:01,admin,admin
87,82522,1296,11053,1423,1,0,N,N,N,CP_Phys,TT_Task,DT_FixedDUR2,RV_OK,TK_NotStart,BEW/ST/IC10/1610,Aggregate Base Course,2553,3598.5,0,90,0,180,90,90,74,0,110,,,,2016-04-25 07:00,2016-05-09 17:00,,2014-09-24 07:30,2014-10-12 08:30,2014-09-24 07:30,2014-10-12 08:30,2014-09-24 07:30,2014-10-12 08:30,,2016-04-25 07:00,2016-05-09 17:00,,PT_Normal,,,,,wOAlsizsW0WRbfW2XX6XUQ,,,,N,0,0,,,2013-10-09 11:38,2013-11-12 09:57,admin,admin
88,82523,1296,11053,1423,1,0,N,N,N,CP_Phys,TT_Task,DT_FixedDUR2,RV_OK,TK_NotStart,BEW/ST/IC10/1660,Crash Barrier & Median Works,2553,3598.5,464,180,0,720,180,180,18,0,360,,,,2016-05-10 07:00,2016-06-06 17:00,,2014-10-12 08:30,2014-11-09 08:30,2014-10-12 08:30,2014-11-09 08:30,2014-10-12 08:30,2014-11-09 08:30,,2016-05-10 07:00,2016-06-06 17:00,,PT_Normal,,,,,3ueNytQVvE+lQ/0h7Yt6kg,,,,N,0,0,,,2013-10-09 11:38,2013-11-12 17:51,admin,admin
89,82524,1296,11053,1423,1,0,N,N,N,CP_Phys,TT_Task,DT_FixedDUR2,RV_OK,TK_NotStart,BEW/ST/IC10/1780,Bituminous Base Course Including IC,2553,3134.5,0,90,0,180,90,90,76,0,60,,,,2016-05-10 07:00,2016-05-23 17:00,,2014-12-23 14:30,2015-01-07 14:30,2014-12-23 14:30,2015-01-07 14:30,2014-12-23 14:30,2015-01-07 14:30,,2016-05-10 07:00,2016-05-23 17:00,,PT_Normal,,,,,JyYmeNRMrUGc+Qra2LFeLg,,,,N,0,0,,,2013-10-09 11:38,2013-11-12 10:02,admin,admin
90,82525,1296,11053,1423,1,0,N,N,N,CP_Phys,TT_Task,DT_FixedDUR2,RV_OK,TK_NotStart,BEW/ST/IC10/1800,Bituminous Wearing Course,2553,3134.5,0,90,0,180,90,90,78,0,70,,,,2016-05-24 07:00,2016-06-06 17:00,,2015-01-07 14:30,2015-01-21 14:30,2015-01-07 14:30,2015-01-21 14:30,2015-01-07 14:30,2015-01-21 14:30,,2016-05-24 07:00,2016-06-06 17:00,,PT_Normal,,,,,hMfm6dIl70CdEgDEeFxWRg,,,,N,0,0,,,2013-10-09 11:38,2013-11-11 22:51,admin,admin
91,82526,1296,11053,1423,1,0,N,N,N,CP_Phys,TT_Task,DT_FixedDUR2,RV_OK,TK_NotStart,BEW/ST/IC10/1820,Miscellaneous Works,2553,3134.5,0,90,0,180,108,90,0,0,0,,,,2016-06-07 07:00,2016-06-20 17:00,,2015-01-21 14:30,2015-02-04 14:30,2015-01-21 14:30,2015-02-04 14:30,2015-01-21 14:30,2015-02-04 14:30,,2016-06-07 07:00,2016-06-20 17:00,,PT_Normal,,,,,xwNc6SGfYU6py/uP03MfOA,,,,N,0,0,,,2013-10-09 11:38,2013-11-11 22:09,admin,admin
92,82531,1296,10964,1423,1,0,N,N,N,CP_Phys,TT_Task,DT_FixedDUR2,RV_OK,TK_NotStart,BEW/RD/INI/1030,Rock Blasting Ch: 96+100 to 97+100,2511,3123.5,0,702,0,77.999999,180,702,225,0,233.999997,,,,2015-03-26 07:00,2015-07-20 17:00,,2013-11-06 15:30,2014-02-27 15:30,2013-11-06 15:30,2014-02-27 15:30,2013-11-06 15:30,2014-02-27 15:30,,2015-03-26 07:00,2015-07-20 17:00,,PT_Normal,,,,,D273Kw9ij02Zl1fcGFcPmA,,,,N,0,0,,,2013-10-09 11:38,2013-11-12 11:04,admin,admin
93,82532,1296,10964,1423,1,0,N,N,N,CP_Phys,TT_Task,DT_FixedDUR2,RV_OK,TK_NotStart,BEW/RD/INI/1100,Rock Blasting Ch: 109+000 to 110+000,2511,3123.5,909,1350,0,149.999999,180,1350,207,0,449.999997,,,,2015-07-21 07:00,2016-02-21 17:00,,2014-02-27 15:30,2014-10-07 15:30,2014-02-27 15:30,2014-10-07 15:30,2014-02-27 15:30,2014-10-07 15:30,,2015-07-21 07:00,2016-02-21 17:00,,PT_Normal,,,,,TMRw7dJDkki7ACpbMJ9wwA,,,,N,0,0,,,2013-10-09 11:38,2013-11-12 11:04,admin,admin
94,82533,1296,10964,1423,1,0,N,N,N,CP_Phys,TT_Task,DT_FixedDUR2,RV_OK,TK_NotStart,BEW/RD/INI/1040,Rock Blasting Ch: 111+700 to 114+500,2511,2529.5,0,1998,0,221.999998,180,1998,207,0,665.999994,,,,2014-12-23 07:00,2015-11-09 17:00,,2013-11-06 15:30,2014-09-25 15:30,2013-11-06 15:30,2014-09-25 15:30,2013-11-06 15:30,2014-09-25 15:30,,2014-12-23 07:00,2015-11-09 17:00,,PT_Normal,,,,,DhoNH8bf5EKVq9Jrd75lAg,,,,N,0,0,,,2013-10-09 11:38,2013-11-12 11:41,admin,admin
95,82534,1296,10964,1423,1,0,N,N,N,CP_Phys,TT_Task,DT_FixedDUR2,RV_OK,TK_NotStart,BEW/RD/INI/1130,Rock Blasting Ch: 114+900 to 116+200,2511,918.5,0,405,0,45,180,405,405,0,135,,,,2015-07-30 07:00,2015-09-30 17:00,,2015-03-01 16:30,2015-05-03 16:30,2015-03-01 16:30,2015-05-03 16:30,2015-03-01 16:30,2015-05-03 16:30,,2015-07-30 07:00,2015-09-30 17:00,,PT_Normal,,,,,eNPXMH6WWUCS9xEoSDSpUQ,,,,N,0,0,,,2013-10-09 11:38,2013-11-12 10:36,admin,admin
96,82535,1296,10964,1423,1,0,N,N,N,CP_Phys,TT_Task,DT_FixedDUR2,RV_OK,TK_NotStart,BEW/RD/INI/1120,Rock Blasting Ch:  119+200 to 120+300,2511,918.5,0,756,0,83.999999,180,756,207,0,251.999997,,,,2015-03-26 07:00,2015-07-29 17:00,,2014-10-30 16:30,2015-03-01 16:30,2014-10-30 16:30,2015-03-01 16:30,2014-10-30 16:30,2015-03-01 16:30,,2015-03-26 07:00,2015-07-29 17:00,,PT_Normal,,,,,zdyjL8Ac6EmSvZaHe8Ouog,,,,N,0,0,,,2013-10-09 11:38,2013-11-12 10:36,admin,admin
97,82536,1296,10964,1423,1,0,N,N,N,CP_Phys,TT_Task,DT_FixedDUR2,RV_OK,TK_NotStart,BEW/RD/INI/1050,Rock Blasting Ch: 122+900 to 124+500,2511,918.5,0,2205,0,244.999998,180,2205,207,0,734.999994,,,,2014-04-02 16:00,2015-03-25 17:00,,2013-11-06 15:30,2014-10-30 16:30,2013-11-06 15:30,2014-10-30 16:30,2013-11-06 15:30,2014-10-30 16:30,,2014-04-02 16:00,2015-03-25 17:00,,PT_Normal,,,,,NIoAcSqylk6rekfavU3PTg,,,,N,0,0,,,2013-10-09 11:38,2013-11-12 10:36,admin,admin
98,82537,1296,10964,1423,1,0,N,N,N,CP_Phys,TT_Task,DT_FixedDUR2,RV_OK,TK_NotStart,BEW/RD/INI/1060,Rock Blasting Ch: 134+300 to 136+100,2511,1584.5,0,3375,0,374.999996,180,3375,207,0,1124.999988,,,,2014-07-16 16:00,2016-01-18 17:00,,2013-11-06 15:30,2015-05-04 16:30,2013-11-06 15:30,2015-05-04 16:30,2013-11-06 15:30,2015-05-04 16:30,,2014-07-16 16:00,2016-01-18 17:00,,PT_Normal,,,,,GCQSiXK3mEKD2iBPSbcBiQ,,,,N,0,0,,,2013-10-09 11:38,2013-11-12 11:41,admin,admin
99,82538,1296,11135,1423,1,0,N,N,N,CP_Phys,TT_Task,DT_FixedDUR2,RV_OK,TK_NotStart,BEW/RD/DRG/1000,Construction of Box Culvert at 91+131,2511,4581.5,0,369,0,1141,252,369,0,0,0,,,,2016-02-25 07:00,2016-04-21 17:00,,2014-02-16 15:30,2014-04-14 15:30,2014-02-16 15:30,2014-04-14 15:30,2014-02-16 15:30,2014-04-14 15:30,,2016-02-25 07:00,2016-04-21 17:00,,PT_Normal,,,,,9ntrFMgIb0WGTyaQIl6V8A,,,,N,0,0,,,2013-10-09 11:38,2013-11-12 17:51,admin,admin
100,82539,1296,11135,1423,1,0,N,N,N,CP_Phys,TT_Task,DT_FixedDUR2,RV_OK,TK_NotStart,BEW/RD/DRG/1010,Construction of Box Culvert at 91+583,2511,4581.5,0,369,0,1170.999999,252,369,0,0,0,,,,2016-02-25 07:00,2016-04-21 17:00,,2014-02-16 15:30,2014-04-14 15:30,2014-02-16 15:30,2014-04-14 15:30,2014-02-16 15:30,2014-04-14 15:30,,2016-02-25 07:00,2016-04-21 17:00,,PT_Normal,,,,,LFwd+W9/VkajpYuAutXXPw,,,,N,0,0,,,2013-10-09 11:38,2013-11-12 17:51,admin,admin
101,82540,1296,11135,1423,1,0,N,N,N,CP_Phys,TT_Task,DT_FixedDUR2,RV_OK,TK_NotStart,BEW/RD/DRG/1100,Construction of Box Culvert at 91+854,2511,4581.5,0,711,0,2182,252,711,0,0,0,,,,2016-04-24 07:00,2016-08-17 17:00,,2014-04-14 15:30,2014-08-11 15:30,2014-04-14 15:30,2014-08-11 15:30,2014-04-14 15:30,2014-08-11 15:30,,2016-04-24 07:00,2016-08-17 17:00,,PT_Normal,,,,,AHia5VJFh02gF2BSbF9wcA,,,,N,0,0,,,2013-10-09 11:38,2013-11-12 17:51,admin,admin
102,82550,1296,11029,1423,1,0,N,N,N,CP_Phys,TT_Task,DT_FixedDUR2,RV_OK,TK_NotStart,BEW/RD1/EW/1000,Asphalt Removal,,4581.5,0,18,0,0,0,18,2,0,2,,,,2015-11-19 07:00,2015-11-22 17:00,,2013-11-06 15:30,2013-11-10 15:30,2013-11-06 15:30,2013-11-10 15:30,2013-11-06 15:30,2013-11-10 15:30,,2015-11-19 07:00,2015-11-22 17:00,,PT_Normal,,,,,WAqM0XWny0SwRD+ymvmzXg,,,,N,0,0,,,2013-10-09 11:38,2013-11-11 22:55,admin,admin
103,82551,1296,11029,1423,1,0,N,N,N,CP_Phys,TT_Task,DT_FixedDUR2,RV_OK,TK_NotStart,BEW/RD1/EW/1010,Removal of Interlock,,4581.5,0,18,0,0,0,18,0,0,0,,,,2015-11-19 07:00,2015-11-22 17:00,,2013-11-06 15:30,2013-11-10 15:30,2013-11-06 15:30,2013-11-10 15:30,2013-11-06 15:30,2013-11-10 15:30,,2015-11-19 07:00,2015-11-22 17:00,,PT_Normal,,,,,tAbBG2uE90av3aB4+g3xNA,,,,N,0,0,,,2013-10-09 11:38,2013-11-11 23:04,admin,admin
104,82552,1296,11029,1423,1,0,N,N,N,CP_Phys,TT_Task,DT_FixedDUR2,RV_OK,TK_NotStart,BEW/RD1/EW/1020,Removal of Kerb,,4581.5,0,18,0,0,0,18,0,0,0,,,,2015-11-19 07:00,2015-11-22 17:00,,2013-11-06 15:30,2013-11-10 15:30,2013-11-06 15:30,2013-11-10 15:30,2013-11-06 15:30,2013-11-10 15:30,,2015-11-19 07:00,2015-11-22 17:00,,PT_Normal,,,,,+v9UsmbOk0WS7bP3Gkit7g,,,,N,0,0,,,2013-10-09 11:38,2013-11-11 23:04,admin,admin
105,82553,1296,11029,1423,1,0,N,N,N,CP_Phys,TT_Task,DT_FixedDUR2,RV_OK,TK_NotStart,BEW/RD1/EW/1030,Removal of Sign Boards,,4581.5,0,18,0,0,0,18,0,0,0,,,,2015-11-19 07:00,2015-11-22 17:00,,2013-11-06 15:30,2013-11-10 15:30,2013-11-06 15:30,2013-11-10 15:30,2013-11-06 15:30,2013-11-10 15:30,,2015-11-19 07:00,2015-11-22 17:00,,PT_Normal,,,,,y66b9cK1nkePZvqnX1/bBA,,,,N,0,0,,,2013-10-09 11:38,2013-11-11 23:04,admin,admin
106,82554,1296,11029,1423,1,0,N,N,N,CP_Phys,TT_Task,DT_FixedDUR2,RV_OK,TK_NotStart,BEW/RD1/EW/1040,Clearing & Grubbing,2511,4581.5,0,18,0,2,18,18,2,0,2,,,,2015-11-23 07:00,2015-11-24 17:00,,2013-11-10 15:30,2013-11-12 15:30,2013-11-10 15:30,2013-11-12 15:30,2013-11-10 15:30,2013-11-12 15:30,,2015-11-23 07:00,2015-11-24 17:00,,PT_Normal,,,,,y6nu3WYcXke/Et+Mo1TiDA,,,,N,0,0,,,2013-10-09 11:38,2013-11-11 22:57,admin,admin
107,82555,1296,11029,1423,1,0,N,N,N,CP_Phys,TT_Task,DT_FixedDUR2,RV_OK,TK_NotStart,BEW/RD1/EW/1050,Excavation,2511,4581.5,0,333,0,15,15,333,108,0,45,,,,2015-11-25 07:00,2016-01-17 17:00,,2013-11-12 15:30,2014-01-06 15:30,2013-11-12 15:30,2014-01-06 15:30,2013-11-12 15:30,2014-01-06 15:30,,2015-11-25 07:00,2016-01-17 17:00,,PT_Normal,,,,,q+IPB9q9Sk+XAtN70DAy5A,,,,N,0,0,,,2013-10-09 11:38,2013-11-12 09:53,admin,admin
108,82556,1296,11029,1423,1,0,N,N,N,CP_Phys,TT_Task,DT_FixedDUR2,RV_OK,TK_NotStart,BEW/RD1/EW/1060,Embankment Filling upto GSB Bottom,2511,4581.5,0,342,0,39,39,342,271,0,234,,,,2016-01-04 07:00,2016-02-24 17:00,,2013-12-22 15:30,2014-02-16 15:30,2013-12-22 15:30,2014-02-16 15:30,2013-12-22 15:30,2014-02-16 15:30,,2016-01-04 07:00,2016-02-24 17:00,,PT_Normal,,,,,RSIbL8Di7EmeYvOUybS4wg,,,,N,0,0,,,2013-10-09 11:38,2013-11-12 09:53,admin,admin
109,82557,1296,11029,1423,1,0,N,N,N,CP_Phys,TT_Task,DT_FixedDUR2,RV_OK,TK_NotStart,BEW/RD1/EW/1070,Granular Sub Base,2511,4581.5,4581.5,63,0,7,54,63,198,0,35,,,,2016-08-18 07:00,2016-08-28 17:00,,2014-08-11 15:30,2014-08-20 15:30,2014-08-11 15:30,2014-08-20 15:30,2014-08-11 15:30,2014-08-20 15:30,,2016-08-18 07:00,2016-08-28 17:00,,PT_Normal,,,,,/+Qm4R+IaU+5Pn6/CJzC+A,,,,N,0,0,,,2013-10-09 11:38,2013-11-12 10:59,admin,admin
110,82843,1296,11044,1423,1,0,N,N,N,CP_Phys,TT_Task,DT_FixedDUR2,RV_OK,TK_NotStart,BEW/RD1/BI/1390,CABC,2511,5714.5,0,270,0,30,72,270,46,0,90,,,,2016-01-31 07:00,2016-03-10 17:00,,2013-07-16 07:00,2013-09-01 08:00,2013-07-16 07:00,2013-09-01 08:00,2013-07-16 07:00,2013-09-01 08:00,,2016-01-31 07:00,2016-03-10 17:00,,PT_Normal,,,,,MvxmoNHn0kyioRZLyoDOLA,,,,N,0,0,,,2013-10-09 11:38,2013-11-12 10:59,admin,admin
111,82844,1296,11044,1423,1,0,N,N,N,CP_Phys,TT_Task,DT_FixedDUR2,RV_OK,TK_NotStart,BEW/RD1/BI/1400,BBC,2511,5714.5,0,261,0,29,72,261,130,0,203,,,,2016-03-13 07:00,2016-04-20 17:00,,2013-09-01 08:00,2013-10-10 07:30,2013-09-01 08:00,2013-10-10 07:30,2013-09-01 08:00,2013-10-10 07:30,,2016-03-13 07:00,2016-04-20 17:00,,PT_Normal,,,,,i/uOGFuwkU2O7e83qsKz0g,,,,N,0,0,,,2013-10-09 11:38,2013-11-12 11:04,admin,admin
112,82845,1296,11044,1423,1,0,N,N,N,CP_Phys,TT_Task,DT_FixedDUR2,RV_OK,TK_NotStart,BEW/RD1/BI/1420,BWC,2511,5714.5,0,90,0,10,72,90,106,0,70,,,,2016-04-21 07:00,2016-05-05 17:00,,2013-10-10 07:30,2013-10-27 16:30,2013-10-10 07:30,2013-10-27 16:30,2013-10-10 07:30,2013-10-27 16:30,,2016-04-21 07:00,2016-05-05 17:00,,PT_Normal,,,,,6fmoXRYBUE2SWGayjOCKjw,,,,N,0,0,,,2013-10-09 11:38,2013-11-12 11:04,admin,admin
113,82879,1296,10956,1423,1,0,N,N,N,CP_Phys,TT_Task,DT_FixedDUR2,RV_OK,TK_NotStart,BEW/RD/INI/1000,Preparation & Approval of Diversion Plan from Royal Oman Police,,5893.5,0,468,0,0,0,468,0,0,0,,,,2016-03-28 07:00,2016-06-08 17:00,,2013-08-19 09:00,2013-11-03 07:30,2013-08-19 09:00,2013-11-03 07:30,2013-08-19 09:00,2013-11-03 07:30,,2016-03-28 07:00,2016-06-08 17:00,,PT_Normal,,,,,Vway+/CgHkyw83Gq5bvldw,,,,N,0,0,,,2013-10-09 11:38,2013-11-12 11:04,admin,admin
114,82880,1296,10956,1423,1,0,N,N,N,CP_Phys,TT_Task,DT_FixedDUR2,RV_OK,TK_NotStart,BEW/RD/INI/1010,Diversion of Existing Traffic if required,,5893.5,5893.5,477,0,0,0,477,0,0,0,,,,2016-06-09 07:00,2016-08-28 17:00,,2013-11-03 07:30,2014-01-21 07:30,2013-11-03 07:30,2014-01-21 07:30,2013-11-03 07:30,2014-01-21 07:30,,2016-06-09 07:00,2016-08-28 17:00,,PT_Normal,,,,,H7BczBN40Eqytb9eAglQrw,,,,N,0,0,,,2013-10-09 11:38,2013-11-12 11:04,admin,admin
115,82881,1296,10947,1423,1,0,N,N,N,CP_Phys,TT_Task,DT_FixedDUR2,RV_OK,TK_NotStart,BEW/EL/GEN/1000,Placing of Enquiry / PO / WO for MEP works,2511,2331.5,0,548,0,608.888888,96.888888,548,0,0,0,,,,2014-08-18 07:00,2014-11-12 17:00,,2013-07-31 07:00,2013-10-29 15:30,2013-07-31 07:00,2013-10-29 15:30,2013-07-31 07:00,2013-10-29 15:30,,2014-08-18 07:00,2014-11-12 17:00,,PT_Normal,,,,,F2P925RnBEesViZWGj7Cng,,,,N,0,0,,,2013-10-09 11:38,2013-11-12 18:27,admin,admin
116,82882,1296,10947,1423,1,0,N,N,N,CP_Phys,TT_Task,DT_FixedDUR2,RV_OK,TK_NotStart,BEW/EL/GEN/1010,Submittals & Approvals,2511,2331.5,0,747,0,829.999999,118.999999,747,0,0,0,,,,2014-10-30 07:00,2015-02-25 17:00,,2013-10-13 16:30,2014-02-13 15:30,2013-10-13 16:30,2014-02-13 15:30,2013-10-13 16:30,2014-02-13 15:30,,2014-10-30 07:00,2015-02-25 17:00,,PT_Normal,,,,,StIqAIQmfU+MYkmZTQQdhg,,,,N,0,0,,,2013-10-09 11:38,2013-11-12 18:28,admin,admin
117,82883,1296,10947,1423,1,0,N,N,N,CP_Phys,TT_Task,DT_FixedDUR2,RV_OK,TK_NotStart,BEW/EL/GEN/1020,Road Lighting and Electrical Instalation,2511,3061.5,2765,3383,0,3758.888885,171,3383,0,0,0,,,,2015-02-11 08:00,2016-08-09 17:00,,2013-09-30 16:30,2015-04-01 15:30,2013-09-30 16:30,2015-04-01 15:30,2013-09-30 16:30,2015-04-01 15:30,,2015-02-11 08:00,2016-08-09 17:00,,PT_Normal,,,,,yvz/EtrNKkGzokZZtRDnIg,,,,N,0,0,,,2013-10-09 11:38,2013-11-12 18:27,admin,admin
118,82884,1296,10947,1423,1,0,N,N,N,CP_Phys,TT_Task,DT_FixedDUR2,RV_OK,TK_NotStart,BEW/EL/GEN/1140,Trafic Sign Illumination,2511,684.5,388,3285,0,3649.999996,418.999996,3285,0,0,0,,,,2015-02-26 07:00,2016-08-09 17:00,,2014-11-09 16:30,2016-04-18 16:30,2014-11-09 16:30,2016-04-18 16:30,2014-11-09 16:30,2016-04-18 16:30,,2015-02-26 07:00,2016-08-09 17:00,,PT_Normal,,,,,NHg1GjBV60O4wsVItfM7Cg,,,,N,0,0,,,2013-10-09 11:38,2013-11-12 18:28,admin,admin
119,82885,1296,10970,1423,1,0,N,N,N,CP_Phys,TT_Task,DT_FixedDUR2,RV_OK,TK_NotStart,BEW/EL/GEN/1030,Casting of foundations & civil finishing,2511,1764.5,0,2484,0,2759.999997,126,2484,0,0,0,,,,2015-03-24 07:00,2016-04-25 17:00,,2014-06-09 15:30,2015-07-20 16:30,2014-06-09 15:30,2015-07-20 16:30,2014-06-09 15:30,2015-07-20 16:30,,2015-03-24 07:00,2016-04-25 17:00,,PT_Normal,,,,,MfnfZzFjfUGWJAe/CWmVzg,,,,N,0,0,,,2013-10-09 11:38,2013-11-12 18:24,admin,admin
120,82886,1296,10970,1423,1,0,N,N,N,CP_Phys,TT_Task,DT_FixedDUR2,RV_OK,TK_NotStart,BEW/EL/GEN/1050,"Installation of 25 M high masts, light fittings & wiring",2511,1764.5,0,2574,0,2859.999997,384.999997,2574,0,0,0,,,,2015-04-07 17:00,2016-05-25 17:00,,2014-06-24 15:30,2015-08-19 16:30,2014-06-24 15:30,2015-08-19 16:30,2014-06-24 15:30,2015-08-19 16:30,,2015-04-07 17:00,2016-05-25 17:00,,PT_Normal,,,,,g/DlKFH+E02F/Xfe01qzbQ,,,,N,0,0,,,2013-10-09 11:38,2013-11-12 18:26,admin,admin
121,82887,1296,10970,1423,1,0,N,N,N,CP_Phys,TT_Task,DT_FixedDUR2,RV_OK,TK_NotStart,BEW/EL/GEN/1120,Installation of MFP & FP with foundation,2511,1908.5,0,2565,0,2849.999997,383.999997,2565,0,0,0,,,,2015-06-18 07:00,2016-08-02 17:00,,2014-08-12 15:30,2015-09-29 16:30,2014-08-12 15:30,2015-09-29 16:30,2014-08-12 15:30,2015-09-29 16:30,,2015-06-18 07:00,2016-08-02 17:00,,PT_Normal,,,,,I+c2JnLHaUOAZZkpUuBUlg,,,,N,0,0,,,2013-10-09 11:38,2013-11-12 18:26,admin,admin
122,82888,1296,10970,1423,1,0,N,N,N,CP_Phys,TT_Task,DT_FixedDUR2,RV_OK,TK_NotStart,BEW/EL/GEN/1070,Main circuit & loop cabling between high masts,2511,2142.5,0,2574,0,2859.999997,348.999997,2574,0,0,0,,,,2015-06-16 07:00,2016-08-01 17:00,,2014-06-26 15:30,2015-08-23 16:30,2014-06-26 15:30,2015-08-23 16:30,2014-06-26 15:30,2015-08-23 16:30,,2015-06-16 07:00,2016-08-01 17:00,,PT_Normal,,,,,xzhyXebwMky9svh/4Ou1ew,,,,N,0,0,,,2013-10-09 11:38,2013-11-12 18:26,admin,admin
123,82889,1296,10970,1423,1,0,N,N,N,CP_Phys,TT_Task,DT_FixedDUR2,RV_OK,TK_NotStart,BEW/EL/GEN/1090,Termination of above street light cables,2511,2142.5,1846,2574,0,2859.999997,321.999997,2574,0,0,0,,,,2015-06-24 07:00,2016-08-09 17:00,,2014-07-06 15:30,2015-08-31 16:30,2014-07-06 15:30,2015-08-31 16:30,2014-07-06 15:30,2015-08-31 16:30,,2015-06-24 07:00,2016-08-09 17:00,,PT_Normal,,,,,fFbIGb+BSEKZBYsrg14RIA,,,,N,0,0,,,2013-10-09 11:38,2013-11-12 18:28,admin,admin
124,82890,1296,10970,1423,1,0,N,N,N,CP_Phys,TT_Task,DT_FixedDUR2,RV_OK,TK_NotStart,BEW/EL/GEN/1130,Earthing works for FPs & high masts,2511,1908.5,1612,2610,0,2899.999997,144,2610,0,0,0,,,,2015-06-18 07:00,2016-08-09 17:00,,2014-08-12 15:30,2015-10-06 16:30,2014-08-12 15:30,2015-10-06 16:30,2014-08-12 15:30,2015-10-06 16:30,,2015-06-18 07:00,2016-08-09 17:00,,PT_Normal,,,,,VPd0rlKQAk+XEc9Sj1IRlg,,,,N,0,0,,,2013-10-09 11:38,2013-11-12 18:25,admin,admin
125,82891,1296,10980,1423,1,0,N,N,N,CP_Phys,TT_Task,DT_FixedDUR2,RV_OK,TK_NotStart,BEW/EL/GEN/1040,Casting & placing of foundations & civil finishing,2511,1764.5,0,2700,0,2999.999997,126,2700,0,0,0,,,,2015-04-01 07:00,2016-06-07 17:00,,2014-06-17 15:30,2015-09-01 16:30,2014-06-17 15:30,2015-09-01 16:30,2014-06-17 15:30,2015-09-01 16:30,,2015-04-01 07:00,2016-06-07 17:00,,PT_Normal,,,,,FJ3w7MtInUi8AaZzUTuthQ,,,,N,0,0,,,2013-10-09 11:38,2013-11-12 18:24,admin,admin
126,82892,1296,10980,1423,1,0,N,N,N,CP_Phys,TT_Task,DT_FixedDUR2,RV_OK,TK_NotStart,BEW/EL/GEN/1060,"Installation of 14 M Poles, light fittings & wiring",2511,1764.5,0,2700,0,2999.999997,171,2700,0,0,0,,,,2015-04-08 07:00,2016-06-14 17:00,,2014-06-24 15:30,2015-09-08 16:30,2014-06-24 15:30,2015-09-08 16:30,2014-06-24 15:30,2015-09-08 16:30,,2015-04-08 07:00,2016-06-14 17:00,,PT_Normal,,,,,ymSzROObIUWclie0UlWbZw,,,,N,0,0,,,2013-10-09 11:38,2013-11-12 18:26,admin,admin
127,82893,1296,10980,1423,1,0,N,N,N,CP_Phys,TT_Task,DT_FixedDUR2,RV_OK,TK_NotStart,BEW/EL/GEN/1080,Main circuit & loop cabling between poles,2511,1764.5,0,2700,0,2999.999997,362.999997,2700,0,0,0,,,,2015-04-15 07:00,2016-06-21 17:00,,2014-07-01 15:30,2015-09-15 16:30,2014-07-01 15:30,2015-09-15 16:30,2014-07-01 15:30,2015-09-15 16:30,,2015-04-15 07:00,2016-06-21 17:00,,PT_Normal,,,,,6Z5RAovvcUS1x7a4q7QWng,,,,N,0,0,,,2013-10-09 11:38,2013-11-12 18:26,admin,admin
128,82894,1296,10980,1423,1,0,N,N,N,CP_Phys,TT_Task,DT_FixedDUR2,RV_OK,TK_NotStart,BEW/EL/GEN/1100,Termination of above street light cables,2511,1764.5,0,2700,0,2999.999997,335.999997,2700,0,0,0,,,,2015-04-22 07:00,2016-06-28 17:00,,2014-07-08 15:30,2015-09-22 16:30,2014-07-08 15:30,2015-09-22 16:30,2014-07-08 15:30,2015-09-22 16:30,,2015-04-22 07:00,2016-06-28 17:00,,PT_Normal,,,,,n/NoQR39gEe3S/4MxzYmQg,,,,N,0,0,,,2013-10-09 11:38,2013-11-12 18:28,admin,admin
129,82895,1296,10980,1423,1,0,N,N,N,CP_Phys,TT_Task,DT_FixedDUR2,RV_OK,TK_NotStart,BEW/EL/GEN/1110,Earthing works for FPs & ckt wise poles,2511,1764.5,1468,2880,0,3199.999997,144,2880,0,0,0,,,,2015-04-30 07:00,2016-08-09 17:00,,2014-07-16 15:30,2015-10-29 16:30,2014-07-16 15:30,2015-10-29 16:30,2014-07-16 15:30,2015-10-29 16:30,,2015-04-30 07:00,2016-08-09 17:00,,PT_Normal,,,,,tGnD8jp8wUi0+fOkb8A4fQ,,,,N,0,0,,,2013-10-09 11:38,2013-11-12 18:25,admin,admin
130,82907,1296,10991,1423,1,0,N,N,N,CP_Phys,TT_Task,DT_FixedDUR2,RV_OK,TK_NotStart,BEW/UTL/GEN/1110,Survey and point marking of OHL,2511,2006.5,0,405,0,450,81,405,0,0,0,,,,2014-12-10 08:00,2015-02-12 08:00,,2014-01-20 07:30,2014-03-24 07:30,2014-01-20 07:30,2014-03-24 07:30,2014-01-20 07:30,2014-03-24 07:30,,2014-12-10 08:00,2015-02-12 08:00,,PT_Normal,,,,,6TOzILfvjkW/bBfI+G1MjA,,,,N,0,0,,,2013-10-09 11:38,2013-11-12 18:28,admin,admin
131,82908,1296,10991,1423,1,0,N,N,N,CP_Phys,TT_Task,DT_FixedDUR2,RV_OK,TK_NotStart,BEW/UTL/GEN/1120,Wooden Post Installation with foundation,2511,2006.5,0,3329,0,3698.888885,414.888885,3329,0,0,0,,,,2015-02-12 08:00,2016-08-02 17:00,,2014-03-24 07:30,2015-09-15 07:30,2014-03-24 07:30,2015-09-15 07:30,2014-03-24 07:30,2015-09-15 07:30,,2015-02-12 08:00,2016-08-02 17:00,,PT_Normal,,,,,vNaZA+oC3kSVwmJ4clRRuw,,,,N,0,0,,,2013-10-09 11:38,2013-11-12 18:42,admin,admin
132,82909,1296,10991,1423,1,0,N,N,N,CP_Phys,TT_Task,DT_FixedDUR2,RV_OK,TK_NotStart,BEW/UTL/GEN/1130,Installation of accessories with supports on pole,2511,2006.5,0,3266,0,3628.888885,461.888885,3266,0,0,0,,,,2015-02-26 08:00,2016-08-07 17:00,,2014-04-07 07:30,2015-09-20 07:30,2014-04-07 07:30,2015-09-20 07:30,2014-04-07 07:30,2015-09-20 07:30,,2015-02-26 08:00,2016-08-07 17:00,,PT_Normal,,,,,vsxHxkkROUWEc6wd0REIMw,,,,N,0,0,,,2013-10-09 11:38,2013-11-12 18:26,admin,admin
133,82910,1296,10991,1423,1,0,N,N,N,CP_Phys,TT_Task,DT_FixedDUR2,RV_OK,TK_NotStart,BEW/UTL/GEN/1140,Stringing of 11 kV Wolf conductors,2511,2006.5,0,3113,0,3458.888885,381.888885,3113,0,0,0,,,,2015-03-05 08:00,2016-07-20 17:00,,2014-04-14 07:30,2015-09-02 07:30,2014-04-14 07:30,2015-09-02 07:30,2014-04-14 07:30,2015-09-02 07:30,,2015-03-05 08:00,2016-07-20 17:00,,PT_Normal,,,,,C3pl84VbE0iVRolUkedSoQ,,,,N,0,0,,,2013-10-09 11:38,2013-11-12 18:28,admin,admin
134,82911,1296,10991,1423,1,0,N,N,N,CP_Phys,TT_Task,DT_FixedDUR2,RV_OK,TK_NotStart,BEW/UTL/GEN/1150,Installation of Stay wires etc.,2511,2006.5,0,3113,0,3458.888885,444.888885,3113,0,0,0,,,,2015-03-15 08:00,2016-07-28 17:00,,2014-04-22 07:30,2015-09-10 07:30,2014-04-22 07:30,2015-09-10 07:30,2014-04-22 07:30,2015-09-10 07:30,,2015-03-15 08:00,2016-07-28 17:00,,PT_Normal,,,,,P/80UlpP8Ei3wDTPHWrwVA,,,,N,0,0,,,2013-10-09 11:38,2013-11-12 18:26,admin,admin
135,82912,1296,11011,1423,1,0,N,N,N,CP_Phys,TT_Task,DT_FixedDUR2,RV_OK,TK_NotStart,BEW/UTL/GEN/1160,Wooden H-Pole Installation with foundation,2511,2006.5,0,2924,0,3248.888886,369.888886,2924,0,0,0,,,,2015-04-12 08:00,2016-07-27 17:00,,2014-05-20 07:30,2015-09-09 07:30,2014-05-20 07:30,2015-09-09 07:30,2014-05-20 07:30,2015-09-09 07:30,,2015-04-12 08:00,2016-07-27 17:00,,PT_Normal,,,,,P7Z0Y8tfT0y9p8a6a2fUsQ,,,,N,0,0,,,2013-10-09 11:38,2013-11-12 18:42,admin,admin
136,82913,1296,11011,1423,1,0,N,N,N,CP_Phys,TT_Task,DT_FixedDUR2,RV_OK,TK_NotStart,BEW/UTL/GEN/1170,Supporting Structure Installation,2511,2006.5,0,2852,0,3168.888886,352.888886,2852,0,0,0,,,,2015-04-19 08:00,2016-07-24 17:00,,2014-05-28 07:30,2015-09-06 07:30,2014-05-28 07:30,2015-09-06 07:30,2014-05-28 07:30,2015-09-06 07:30,,2015-04-19 08:00,2016-07-24 17:00,,PT_Normal,,,,,v7d4LAuCTU28mx/pxaLADg,,,,N,0,0,,,2013-10-09 11:38,2013-11-12 18:28,admin,admin
137,82914,1296,11011,1423,1,0,N,N,N,CP_Phys,TT_Task,DT_FixedDUR2,RV_OK,TK_NotStart,BEW/UTL/GEN/1190,Installation of TX & FP on H-pole,2511,2006.5,0,2780,0,3088.888886,407.888886,2780,0,0,0,,,,2015-04-26 08:00,2016-07-19 17:00,,2014-06-04 07:30,2015-09-01 07:30,2014-06-04 07:30,2015-09-01 07:30,2014-06-04 07:30,2015-09-01 07:30,,2015-04-26 08:00,2016-07-19 17:00,,PT_Normal,,,,,6wdPlZw10kan5G1p2dgy2g,,,,N,0,0,,,2013-10-09 11:38,2013-11-12 18:26,admin,admin
138,82915,1296,11011,1423,1,0,N,N,N,CP_Phys,TT_Task,DT_FixedDUR2,RV_OK,TK_NotStart,BEW/UTL/GEN/1210,Installation of Various accessories,2511,2006.5,0,2798,0,3108.888886,409.888886,2798,0,0,0,,,,2015-05-03 08:00,2016-07-28 17:00,,2014-06-11 07:30,2015-09-10 07:30,2014-06-11 07:30,2015-09-10 07:30,2014-06-11 07:30,2015-09-10 07:30,,2015-05-03 08:00,2016-07-28 17:00,,PT_Normal,,,,,X6Xy1ZdBJ0ismBeIBtJWXQ,,,,N,0,0,,,2013-10-09 11:38,2013-11-12 18:26,admin,admin
139,82916,1296,11011,1423,1,0,N,N,N,CP_Phys,TT_Task,DT_FixedDUR2,RV_OK,TK_NotStart,BEW/UTL/GEN/1230,Jumpering between TX & O/H Conductors,2511,2006.5,0,2798,0,3108.888886,409.888886,2798,0,0,0,,,,2015-05-10 08:00,2016-08-04 17:00,,2014-06-18 07:30,2015-09-17 07:30,2014-06-18 07:30,2015-09-17 07:30,2014-06-18 07:30,2015-09-17 07:30,,2015-05-10 08:00,2016-08-04 17:00,,PT_Normal,,,,,M21uRUwYX0OswDJLaPu0mw,,,,N,0,0,,,2013-10-09 11:38,2013-11-12 18:26,admin,admin
140,82917,1296,11011,1423,1,0,N,N,N,CP_Phys,TT_Task,DT_FixedDUR2,RV_OK,TK_NotStart,BEW/UTL/GEN/1250,Cabling & Termination between TX & FP.,2511,2006.5,0,2798,0,3108.888886,126,2798,0,0,0,,,,2015-05-21 08:00,2016-08-11 17:00,,2014-06-25 07:30,2015-09-24 07:30,2014-06-25 07:30,2015-09-24 07:30,2014-06-25 07:30,2015-09-24 07:30,,2015-05-21 08:00,2016-08-11 17:00,,PT_Normal,,,,,U04NaDyFR0CzIoNC8h2UTA,,,,N,0,0,,,2013-10-09 11:38,2013-11-12 18:24,admin,admin
141,82918,1296,11011,1423,1,0,N,N,N,CP_Phys,TT_Task,DT_FixedDUR2,RV_OK,TK_NotStart,BEW/UTL/GEN/1270,Installation of Stay wires etc.,2511,2006.5,0,2852,0,3168.888886,415.888886,2852,0,0,0,,,,2015-05-31 08:00,2016-08-28 17:00,,2014-07-02 07:30,2015-10-11 07:30,2014-07-02 07:30,2015-10-11 07:30,2014-07-02 07:30,2015-10-11 07:30,,2015-05-31 08:00,2016-08-28 17:00,,PT_Normal,,,,,ULA99lpcz02mxbDmqLNolQ,,,,N,0,0,,,2013-10-09 11:38,2013-11-12 18:26,admin,admin
142,82919,1296,11011,1423,1,0,N,N,N,CP_Phys,TT_Task,DT_FixedDUR2,RV_OK,TK_NotStart,BEW/UTL/GEN/1290,Earthing & connections complete,2511,2015.5,0,2798,0,3108.888886,346.888886,2798,0,0,0,,,,2015-06-08 08:00,2016-08-28 17:00,,2014-07-09 07:30,2015-10-08 07:30,2014-07-09 07:30,2015-10-08 07:30,2014-07-09 07:30,2015-10-08 07:30,,2015-06-08 08:00,2016-08-28 17:00,,PT_Normal,,,,,F3h3siPBRkmDgYrufjfFxA,,,,N,0,0,,,2013-10-09 11:38,2013-11-12 18:25,admin,admin
143,82920,1296,11015,1423,1,0,N,N,N,CP_Phys,TT_Task,DT_FixedDUR2,RV_OK,TK_NotStart,BEW/UTL/GEN/1180,Installation of H-Poles & stay wire etc.,2511,2438.5,0,2573,0,2858.888886,384.888886,2573,0,0,0,,,,2015-07-01 08:00,2016-08-16 17:00,,2014-05-28 07:30,2015-07-22 07:30,2014-05-28 07:30,2015-07-22 07:30,2014-05-28 07:30,2015-07-22 07:30,,2015-07-01 08:00,2016-08-16 17:00,,PT_Normal,,,,,hlsNme1RdkqwUph3WDiznw,,,,N,0,0,,,2013-10-09 11:38,2013-11-12 18:26,admin,admin
144,82921,1296,11015,1423,1,0,N,N,N,CP_Phys,TT_Task,DT_FixedDUR2,RV_OK,TK_NotStart,BEW/UTL/GEN/1200,Excavation & backfilling of trench after cabling,2511,2438.5,0,2528,0,280.888886,15,2528,0,0,0,,,,2015-07-08 08:00,2016-08-16 17:00,,2014-06-04 07:30,2015-07-22 07:30,2014-06-04 07:30,2015-07-22 07:30,2014-06-04 07:30,2015-07-22 07:30,,2015-07-08 08:00,2016-08-16 17:00,,PT_Normal,,,,,3YlMDriZuE6YSY4NLEwZCQ,,,,N,0,0,,,2013-10-09 11:38,2013-11-12 18:25,admin,admin
145,82922,1296,11015,1423,1,0,N,N,N,CP_Phys,TT_Task,DT_FixedDUR2,RV_OK,TK_NotStart,BEW/UTL/GEN/1220,Laying of 11 kV cable on road crossings,2511,2438.5,0,2438,0,2708.888886,369.888886,2438,0,0,0,,,,2015-07-15 08:00,2016-08-09 17:00,,2014-06-11 07:30,2015-07-15 07:30,2014-06-11 07:30,2015-07-15 07:30,2014-06-11 07:30,2015-07-15 07:30,,2015-07-15 08:00,2016-08-09 17:00,,PT_Normal,,,,,ovykuJcWpkC70b/6zJi2FA,,,,N,0,0,,,2013-10-09 11:38,2013-11-12 18:26,admin,admin
146,82923,1296,11015,1423,1,0,N,N,N,CP_Phys,TT_Task,DT_FixedDUR2,RV_OK,TK_NotStart,BEW/UTL/GEN/1240,End termination/Jointing of cable.,2511,2438.5,0,2258,0,2508.888886,286.888886,2258,0,0,0,,,,2015-07-22 08:00,2016-07-19 17:00,,2014-06-18 07:30,2015-06-24 07:30,2014-06-18 07:30,2015-06-24 07:30,2014-06-18 07:30,2015-06-24 07:30,,2015-07-22 08:00,2016-07-19 17:00,,PT_Normal,,,,,F4o5mV+SUUGGBO9EEEz8jQ,,,,N,0,0,,,2013-10-09 11:38,2013-11-12 18:25,admin,admin
147,82924,1296,11015,1423,1,0,N,N,N,CP_Phys,TT_Task,DT_FixedDUR2,RV_OK,TK_NotStart,BEW/UTL/GEN/1260,Removal of 11 kV OHL,2511,2438.5,0,2258,0,2508.888886,313.888886,2258,0,0,0,,,,2015-07-30 08:00,2016-07-26 17:00,,2014-06-25 07:30,2015-07-01 07:30,2014-06-25 07:30,2015-07-01 07:30,2014-06-25 07:30,2015-07-01 07:30,,2015-07-30 08:00,2016-07-26 17:00,,PT_Normal,,,,,iO1WEKK48EytQNkiKddufg,,,,N,0,0,,,2013-10-09 11:38,2013-11-12 18:27,admin,admin
148,82925,1296,11015,1423,1,0,N,N,N,CP_Phys,TT_Task,DT_FixedDUR2,RV_OK,TK_NotStart,BEW/UTL/GEN/1280,Cable testing and Jumpering betwn cable & cond.,2511,2438.5,0,2258,0,2508.888886,126,2258,0,0,0,,,,2015-08-06 08:00,2016-08-02 17:00,,2014-07-02 07:30,2015-07-08 07:30,2014-07-02 07:30,2015-07-08 07:30,2014-07-02 07:30,2015-07-08 07:30,,2015-08-06 08:00,2016-08-02 17:00,,PT_Normal,,,,,6C//ZozHeEKKBqs9v9nc4Q,,,,N,0,0,,,2013-10-09 11:38,2013-11-12 18:24,admin,admin
149,82926,1296,11015,1423,1,0,N,N,N,CP_Phys,TT_Task,DT_FixedDUR2,RV_OK,TK_NotStart,BEW/UTL/GEN/1300,Shutdown & charging existing OHL system,2511,2438.5,2142,2258,0,2508.888886,108,2258,0,0,0,,,,2015-08-13 08:00,2016-08-09 17:00,,2014-07-09 07:30,2015-07-15 07:30,2014-07-09 07:30,2015-07-15 07:30,2014-07-09 07:30,2015-07-15 07:30,,2015-08-13 08:00,2016-08-09 17:00,,PT_Normal,,,,,YkH2A9sFJU+Jx0+VUTKwgA,,,,N,0,0,,,2013-10-09 11:38,2013-11-12 18:27,admin,admin
150,82927,1296,11010,1423,1,0,N,N,N,CP_Phys,TT_Task,DT_FixedDUR2,RV_OK,TK_NotStart,BEW/UTL/GEN/1060,Construction of Substation building (CIVIL WORKS),2511,5994.5,0,540,0,599.999999,167.999999,540,0,0,0,,,,2016-05-31 07:00,2016-08-28 17:00,,2013-10-03 16:30,2014-01-02 15:30,2013-10-03 16:30,2014-01-02 15:30,2013-10-03 16:30,2014-01-02 15:30,,2016-05-31 07:00,2016-08-28 17:00,,PT_Normal,,,,,bbXXB8KkUU2O5rWlvD7B6Q,,,,N,0,0,,,2013-10-09 11:38,2013-11-12 18:25,admin,admin
151,82928,1296,11010,1423,1,0,N,N,N,CP_Phys,TT_Task,DT_FixedDUR2,RV_OK,TK_NotStart,BEW/UTL/GEN/1070,"Casting of foundation for TX, RMU & FP.",2511,6165.5,0,216,0,240,126,216,0,0,0,,,,2016-06-27 07:00,2016-08-03 17:00,,2013-10-03 16:30,2013-11-11 15:30,2013-10-03 16:30,2013-11-11 15:30,2013-10-03 16:30,2013-11-11 15:30,,2016-06-27 07:00,2016-08-03 17:00,,PT_Normal,,,,,XjoqiZcFH0qhg7RdAYRjUg,,,,N,0,0,,,2013-10-09 11:38,2013-11-12 18:24,admin,admin
152,82929,1296,11010,1423,1,0,N,N,N,CP_Phys,TT_Task,DT_FixedDUR2,RV_OK,TK_NotStart,BEW/UTL/GEN/1080,"Installation of TX, RMU & FP.",2511,6165.5,0,180,0,200,119,180,0,0,0,,,,2016-06-29 07:00,2016-08-01 17:00,,2013-10-07 16:30,2013-11-07 15:30,2013-10-07 16:30,2013-11-07 15:30,2013-10-07 16:30,2013-11-07 15:30,,2016-06-29 07:00,2016-08-01 17:00,,PT_Normal,,,,,/TFixUTs/k+VB2pPrrcvaA,,,,N,0,0,,,2013-10-09 11:38,2013-11-12 18:26,admin,admin
153,82930,1296,11010,1423,1,0,N,N,N,CP_Phys,TT_Task,DT_FixedDUR2,RV_OK,TK_NotStart,BEW/UTL/GEN/1090,Cabling & termination between TX - RMU - FP,2511,6165.5,0,180,0,200,126,180,0,0,0,,,,2016-07-03 07:00,2016-08-03 17:00,,2013-10-09 16:30,2013-11-11 15:30,2013-10-09 16:30,2013-11-11 15:30,2013-10-09 16:30,2013-11-11 15:30,,2016-07-03 07:00,2016-08-03 17:00,,PT_Normal,,,,,ZPRrs1hEh0mXaS9uBYqjpg,,,,N,0,0,,,2013-10-09 11:38,2013-11-12 18:24,admin,admin
154,82931,1296,11010,1423,1,0,N,N,N,CP_Phys,TT_Task,DT_FixedDUR2,RV_OK,TK_NotStart,BEW/UTL/GEN/1100,Earthing network for S/S,2511,6165.5,5869,198,0,220,58,198,0,0,0,,,,2016-07-11 07:00,2016-08-09 17:00,,2013-10-13 16:30,2013-11-17 15:30,2013-10-13 16:30,2013-11-17 15:30,2013-10-13 16:30,2013-11-17 15:30,,2016-07-11 07:00,2016-08-09 17:00,,PT_Normal,,,,,3Mv32wB+HkOMCaih5J6nPQ,,,,N,0,0,,,2013-10-09 11:38,2013-11-12 18:25,admin,admin
155,82965,1296,10978,1423,1,0,N,N,N,CP_Phys,TT_Task,DT_FixedDUR2,RV_OK,TK_NotStart,BEW/UTL/GEN/1040,Protection of 33 KV line,2511,5336,5039.5,891,0,990.999999,162.999999,889,0,0,0,,,,2016-03-17 07:00,2016-08-09 17:00,,2013-11-07 07:00,2014-03-30 17:00,2013-11-07 07:00,2014-03-30 17:00,2013-11-07 07:00,2014-03-30 15:00,,2016-03-17 07:00,2016-08-09 17:00,,PT_Normal,,,,,OXCC3D7GvkuTSF32wcfCyw,,,,N,0,0,,,2013-10-09 11:38,2013-11-12 18:27,admin,admin
156,82966,1296,10978,1423,1,0,N,N,N,CP_Phys,TT_Task,DT_FixedDUR2,RV_OK,TK_NotStart,BEW/UTL/GEN/1050,Protection of Telephone cables,2511,4922,0,891,0,990.999999,162.999999,889,0,0,0,,,,2016-01-13 07:00,2016-05-31 17:00,,2013-11-07 07:00,2014-03-30 17:00,2013-11-07 07:00,2014-03-30 17:00,2013-11-07 07:00,2014-03-30 15:00,,2016-01-13 07:00,2016-05-31 17:00,,PT_Normal,,,,,mmJ+ibJ/Y0Kza2GNE+Xlvw,,,,N,0,0,,,2013-10-09 11:38,2013-11-12 18:27,admin,admin
157,82967,1296,10969,1423,1,0,N,N,N,CP_Phys,TT_Task,DT_FixedDUR2,RV_OK,TK_NotStart,BEW/UTL/GEN/1310,Instalation of FOC for ROP,2511,1629.5,1333,2340,0,2599.999997,108,2340,0,0,0,,,,2015-08-02 07:00,2016-08-09 17:00,,2014-11-09 16:30,2015-11-22 16:30,2014-11-09 16:30,2015-11-22 16:30,2014-11-09 16:30,2015-11-22 16:30,,2015-08-02 07:00,2016-08-09 17:00,,PT_Normal,,,,,hmHBvX1BQUCPIeXBCm28yA,,,,N,0,0,,,2013-10-09 11:38,2013-11-12 18:26,admin,admin
158,82968,1296,10969,1423,1,0,N,N,N,CP_Phys,TT_Task,DT_FixedDUR2,RV_OK,TK_NotStart,BEW/UTL/GEN/1320,Telephone Utility Works,2511,684.5,388,3285,0,3649.999996,400.999996,3285,0,0,0,,,,2015-02-26 07:00,2016-08-09 17:00,,2014-11-09 16:30,2016-04-18 16:30,2014-11-09 16:30,2016-04-18 16:30,2014-11-09 16:30,2016-04-18 16:30,,2015-02-26 07:00,2016-08-09 17:00,,PT_Normal,,,,,TsioBBu8r0uf5lR9EhdLpg,,,,N,0,0,,,2013-10-09 11:38,2013-11-12 18:28,admin,admin
159,82969,1296,10948,1423,1,0,N,N,N,CP_Phys,TT_Task,DT_FixedDUR2,RV_OK,TK_NotStart,BEW/CL/GEN/1000,Clearing the Site,2511,296.5,296.5,108,0,14,18,108,0,0,0,,,,2016-08-10 07:00,2016-08-25 17:00,,2016-06-20 07:30,2016-07-12 07:30,2016-06-20 07:30,2016-07-12 07:30,2016-06-20 07:30,2016-07-12 07:30,,2016-08-10 07:00,2016-08-25 17:00,,PT_Normal,,,,,PKXqNE2hx0CjZRWQsTBfmA,,,,N,0,0,,,2013-10-09 11:38,2013-11-12 11:41,admin,admin
160,82970,1296,10948,1423,1,0,N,N,N,CP_Phys,TT_Task,DT_FixedDUR2,RV_OK,TK_NotStart,BEW/CL/GEN/1010,Handing over the sites,2511,0,0,9,0,5,5,9,0,0,0,,,,2016-08-28 07:00,2016-08-28 17:00,,2016-08-28 07:00,2016-08-28 17:00,2016-08-28 07:00,2016-08-28 17:00,2016-08-28 07:00,2016-08-28 17:00,,2016-08-28 07:00,2016-08-28 17:00,,PT_Normal,,,,,xrATnUkV5EyD6MdJyPJpXA,,,,Y,0,0,,,2013-10-09 11:38,2013-11-12 11:41,admin,admin
161,82971,1296,10976,1423,1,0,N,N,N,CP_Drtn,TT_Task,DT_FixedDUR2,RV_OK,TK_NotStart,BEW/RD/INI/1070,Preparation Embankment & GSB Stock pile,2511,1583.5,1214,4500,0,499.999995,180,4500,269.674,0,2499.999975,,,,2014-09-02 16:00,2016-08-28 17:00,,2013-12-18 16:30,2015-12-17 07:30,2013-12-18 16:30,2015-12-17 07:30,2013-12-18 16:30,2015-12-17 07:30,,2014-09-02 16:00,2016-08-28 17:00,,PT_Normal,,,,,x/RzHr3sVkS9Rt3YCyc04g,,,,N,0,0,,,2013-10-09 11:38,2013-11-12 10:03,admin,admin
162,82972,1296,10976,1423,1,0,N,N,N,CP_Drtn,TT_Task,DT_FixedDUR2,RV_OK,TK_NotStart,BEW/RD/INI/1110,"Production Asphalt for BBC, BWC",2511,395.5,395.5,4878,0,549.998143,180,4878,54,0,13.333332,,,,2014-06-29 16:00,2016-08-28 17:00,,2014-04-27 16:30,2016-06-22 07:30,2014-04-27 16:30,2016-06-22 07:30,2014-04-27 16:30,2016-06-22 07:30,,2014-06-29 16:00,2016-08-28 17:00,,PT_Normal,,,,,UzGdvYdBJk6thPdQCS4Pew,,,,N,0,0,,,2013-10-09 11:38,2013-11-12 10:59,admin,admin
163,82973,1296,10976,1423,1,0,N,N,N,CP_Drtn,TT_Task,DT_FixedDUR2,RV_OK,TK_NotStart,BEW/RD/INI/1090,Production of Concrete,2511,559.483333333333,262.983333333333,5228.01666666667,0,579.998142,180,5228,216,0,31.111108,,,,2014-04-15 16:59,2016-08-09 17:00,,2014-01-19 15:30,2016-05-09 15:31,2014-01-19 15:30,2016-05-09 15:31,2014-01-19 15:30,2016-05-09 15:30,,2014-04-15 16:59,2016-08-09 17:00,,PT_Normal,,,,,vmWBtHYm80KSPCxf+7HFHA,,,,N,0,0,,,2013-10-09 11:38,2013-11-12 11:41,admin,admin
164,82974,1296,10976,1423,1,0,N,N,N,CP_Drtn,TT_Task,DT_FixedDUR2,RV_OK,TK_NotStart,BEW/RD/INI/1080,Production of CABC,2511,296.5,0,5670,0,629.999994,180,5670,261,0,2537.999976,,,,2014-02-05 16:00,2016-08-09 17:00,,2013-12-18 16:30,2016-06-20 07:30,2013-12-18 16:30,2016-06-20 07:30,2013-12-18 16:30,2016-06-20 07:30,,2014-02-05 16:00,2016-08-09 17:00,,PT_Normal,,,,,HefeSqXVJk+9KtVygAJxWw,,,,N,0,0,,,2013-10-09 11:38,2013-11-12 11:41,admin,admin
165,82975,1296,10944,1422,0,0,N,N,N,CP_Drtn,TT_FinMile,DT_FixedDrtn,RV_OK,TK_NotStart,BEW/GEN/MS/0020,Handing Over of the Site,,0,0,0,0,0,0,0,0,0,0,,,,2016-08-28 17:00,2016-08-28 17:00,,2016-08-28 17:00,2016-08-28 17:00,2016-08-28 17:00,2016-08-28 17:00,2016-08-28 17:00,2016-08-28 17:00,,2016-08-28 17:00,2016-08-28 17:00,,PT_Normal,,,,,i4aFyjwuEEy4PWtrgQ+Ubg,,,,Y,0,0,,,2013-10-09 11:38,2013-11-12 11:41,admin,admin
166,82976,1296,10958,1422,1,0,N,N,N,CP_Drtn,TT_Task,DT_FixedDUR2,RV_OK,TK_NotStart,BEW/MO/NC/1050,Obtaining NOC from Omantel,,5002,0,189,0,0,0,189,0,0,0,,,,2015-01-27 15:00,2015-02-17 15:00,,2013-07-21 07:00,2013-08-10 17:00,2013-07-21 07:00,2013-08-10 17:00,2013-07-21 07:00,2013-08-10 17:00,,2015-01-27 15:00,2015-02-17 15:00,,PT_Normal,,,,,/z9FYjXLRkGGYksauft/pw,,,,N,0,0,,,2013-10-09 11:38,2013-11-11 17:02,admin,admin
167,82977,1296,10958,1422,1,0,N,N,N,CP_Drtn,TT_Task,DT_FixedDUR2,RV_OK,TK_NotStart,BEW/MO/NC/1060,Obtaining NOC from ROP,,5002,0,189,0,0,0,189,0,0,0,,,,2015-01-27 15:00,2015-02-17 15:00,,2013-07-21 07:00,2013-08-10 17:00,2013-07-21 07:00,2013-08-10 17:00,2013-07-21 07:00,2013-08-10 17:00,,2015-01-27 15:00,2015-02-17 15:00,,PT_Normal,,,,,TsUVEkTvaE+dLEOh8VqUPQ,,,,N,0,0,,,2013-10-09 11:38,2013-11-11 17:02,admin,admin
168,82978,1296,10958,1422,1,0,N,N,N,CP_Drtn,TT_Task,DT_FixedDUR2,RV_OK,TK_NotStart,BEW/MO/NC/1070,Obtaining NOC from Ministry of Commerce,,5002,0,189,0,0,0,189,0,0,0,,,,2015-01-27 15:00,2015-02-17 15:00,,2013-07-21 07:00,2013-08-10 17:00,2013-07-21 07:00,2013-08-10 17:00,2013-07-21 07:00,2013-08-10 17:00,,2015-01-27 15:00,2015-02-17 15:00,,PT_Normal,,,,,R5yf7BQMD0CJxkc0i7xuGw,,,,N,0,0,,,2013-10-09 11:38,2013-11-11 17:02,admin,admin
169,82979,1296,10958,1422,1,0,N,N,N,CP_Drtn,TT_Task,DT_FixedDUR2,RV_OK,TK_NotStart,BEW/MO/NC/1080,Obtaining NOC from Oman Refinery,,5002,0,189,0,0,0,189,0,0,0,,,,2015-01-27 15:00,2015-02-17 15:00,,2013-07-21 07:00,2013-08-10 17:00,2013-07-21 07:00,2013-08-10 17:00,2013-07-21 07:00,2013-08-10 17:00,,2015-01-27 15:00,2015-02-17 15:00,,PT_Normal,,,,,tcoVcM90LUWpwFJcfnSoSA,Ba5AIEPCc0GQfYBEo4wezg,,,N,0,0,,,2013-10-09 11:38,2013-11-11 17:02,admin,admin
170,82980,1296,10958,1422,1,0,N,N,N,CP_Drtn,TT_Task,DT_FixedDUR2,RV_OK,TK_NotStart,BEW/MO/NC/1090,Obtaining NOC from PDO,,5002,0,189,0,0,0,189,0,0,0,,,,2015-01-27 15:00,2015-02-17 15:00,,2013-07-21 07:00,2013-08-10 17:00,2013-07-21 07:00,2013-08-10 17:00,2013-07-21 07:00,2013-08-10 17:00,,2015-01-27 15:00,2015-02-17 15:00,,PT_Normal,,,,,ChoXWCLJ80qXlVl4QsrkXg,P9kaPxIgl0Ok6qS2+W+uNg,,,N,0,0,,,2013-10-09 11:38,2013-11-11 17:02,admin,admin
171,82981,1296,10958,1422,1,0,N,N,N,CP_Drtn,TT_Task,DT_FixedDUR2,RV_OK,TK_NotStart,BEW/MO/NC/1100,Obtaining NOC from Ministy of Defence,,5002,0,189,0,0,0,189,0,0,0,,,,2015-01-27 15:00,2015-02-17 15:00,,2013-07-21 07:00,2013-08-10 17:00,2013-07-21 07:00,2013-08-10 17:00,2013-07-21 07:00,2013-08-10 17:00,,2015-01-27 15:00,2015-02-17 15:00,,PT_Normal,,,,,QJcnnxLUX0y9MBht8qFAKw,lEst6fWe3kSQPcPewTwBPw,,,N,0,0,,,2013-10-09 11:38,2013-11-11 17:02,admin,admin
172,82982,1296,10958,1422,1,0,N,N,N,CP_Drtn,TT_Task,DT_FixedDUR2,RV_OK,TK_NotStart,BEW/MO/NC/1110,Obtaining NOC from Ministry of Heritage,,5002,0,189,0,0,0,189,0,0,0,,,,2015-01-27 15:00,2015-02-17 15:00,,2013-07-21 07:00,2013-08-10 17:00,2013-07-21 07:00,2013-08-10 17:00,2013-07-21 07:00,2013-08-10 17:00,,2015-01-27 15:00,2015-02-17 15:00,,PT_Normal,,,,,KX+V2dwSrkiYuCQ80yUz1g,Ba5AIEPCc0GQfYBEo4wezg,,,N,0,0,,,2013-10-09 11:38,2013-11-11 17:02,admin,admin
173,82983,1296,10958,1422,1,0,N,N,N,CP_Drtn,TT_Task,DT_FixedDUR2,RV_OK,TK_NotStart,BEW/MO/NC/1120,Obtaining NOC from PAEW,,5002,0,189,0,0,0,189,0,0,0,,,,2015-01-27 15:00,2015-02-17 15:00,,2013-07-21 07:00,2013-08-10 17:00,2013-07-21 07:00,2013-08-10 17:00,2013-07-21 07:00,2013-08-10 17:00,,2015-01-27 15:00,2015-02-17 15:00,,PT_Normal,,,,,6S+2zqUUm0u4BbkMwn41EA,P9kaPxIgl0Ok6qS2+W+uNg,,,N,0,0,,,2013-10-09 11:38,2013-11-11 17:02,admin,admin
174,82984,1296,10958,1422,1,0,N,N,N,CP_Drtn,TT_Task,DT_FixedDUR2,RV_OK,TK_NotStart,BEW/MO/NC/1130,Obtaining NOC from Ministry Agriculture,,5002,0,189,0,0,0,189,0,0,0,,,,2015-01-27 15:00,2015-02-17 15:00,,2013-07-21 07:00,2013-08-10 17:00,2013-07-21 07:00,2013-08-10 17:00,2013-07-21 07:00,2013-08-10 17:00,,2015-01-27 15:00,2015-02-17 15:00,,PT_Normal,,,,,0bcMMWCgN0CUIqpTqF1WJA,lEst6fWe3kSQPcPewTwBPw,,,N,0,0,,,2013-10-09 11:38,2013-11-11 17:02,admin,admin
175,82985,1296,10958,1422,1,0,N,N,N,CP_Drtn,TT_Task,DT_FixedDUR2,RV_OK,TK_NotStart,BEW/MO/NC/1140,Obtaining NOC from Nawras,,5002,0,189,0,0,0,189,0,0,0,,,,2015-01-27 15:00,2015-02-17 15:00,,2013-07-21 07:00,2013-08-10 17:00,2013-07-21 07:00,2013-08-10 17:00,2013-07-21 07:00,2013-08-10 17:00,,2015-01-27 15:00,2015-02-17 15:00,,PT_Normal,,,,,O+eRbUtY/ESujE1U6XfXWw,16deQv2QbUS+WZn26T2ryQ,,,N,0,0,,,2013-10-09 11:38,2013-11-11 17:02,admin,admin
176,82986,1296,10958,1422,1,0,N,N,N,CP_Drtn,TT_Task,DT_FixedDUR2,RV_OK,TK_NotStart,BEW/MO/NC/1150,Obtaining NOC from Majan,,5002,0,189,0,0,0,189,0,0,0,,,,2015-01-27 15:00,2015-02-17 15:00,,2013-07-21 07:00,2013-08-10 17:00,2013-07-21 07:00,2013-08-10 17:00,2013-07-21 07:00,2013-08-10 17:00,,2015-01-27 15:00,2015-02-17 15:00,,PT_Normal,,,,,l8yrLEao/Uyv2qiFfVky2Q,8LvrDMSx1k28RT2mK5oqnQ,,,N,0,0,,,2013-10-09 11:38,2013-11-11 17:02,admin,admin
177,82987,1296,10958,1422,1,0,N,N,N,CP_Drtn,TT_Task,DT_FixedDUR2,RV_OK,TK_NotStart,BEW/MO/NC/1160,Obtaining NOC from OETC,,5002,0,189,0,0,0,189,0,0,0,,,,2015-01-27 15:00,2015-02-17 15:00,,2013-07-21 07:00,2013-08-10 17:00,2013-07-21 07:00,2013-08-10 17:00,2013-07-21 07:00,2013-08-10 17:00,,2015-01-27 15:00,2015-02-17 15:00,,PT_Normal,,,,,IvGQt+zCr0y5CUwJGlOj/A,641XFtdDoUSeG3OEhUDBFQ,,,N,0,0,,,2013-10-09 11:38,2013-11-11 17:02,admin,admin
178,82988,1296,10958,1422,1,0,N,N,N,CP_Drtn,TT_Task,DT_FixedDUR2,RV_OK,TK_NotStart,BEW/MO/NC/1170,Obtaining NOC from Oman Gas,,5002,0,189,0,0,0,189,0,0,0,,,,2015-01-27 15:00,2015-02-17 15:00,,2013-07-21 07:00,2013-08-10 17:00,2013-07-21 07:00,2013-08-10 17:00,2013-07-21 07:00,2013-08-10 17:00,,2015-01-27 15:00,2015-02-17 15:00,,PT_Normal,,,,,g63aq2M+PkCgaZLkjOdg2A,mbgiYOGIPkeBgcRIE4rZyw,,,N,0,0,,,2013-10-09 11:38,2013-11-11 17:02,admin,admin
179,82989,1296,10958,1422,1,0,N,N,N,CP_Drtn,TT_Task,DT_FixedDUR2,RV_OK,TK_NotStart,BEW/MO/NC/1180,Obtaining NOC from Regional Municipality,,5002,0,189,0,0,0,189,0,0,0,,,,2015-01-27 15:00,2015-02-17 15:00,,2013-07-21 07:00,2013-08-10 17:00,2013-07-21 07:00,2013-08-10 17:00,2013-07-21 07:00,2013-08-10 17:00,,2015-01-27 15:00,2015-02-17 15:00,,PT_Normal,,,,,mm/zAI7Vj06fR62rODEKMw,YTn3sp3MpEW0g76yPKb6tA,,,N,0,0,,,2013-10-09 11:38,2013-11-11 17:02,admin,admin
180,82990,1296,10958,1422,1,0,N,N,N,CP_Drtn,TT_Task,DT_FixedDUR2,RV_OK,TK_NotStart,BEW/MO/NC/1190,Obtaining NOC from Ministry of Interior,,5002,0,189,0,0,0,189,0,0,0,,,,2015-01-27 15:00,2015-02-17 15:00,,2013-07-21 07:00,2013-08-10 17:00,2013-07-21 07:00,2013-08-10 17:00,2013-07-21 07:00,2013-08-10 17:00,,2015-01-27 15:00,2015-02-17 15:00,,PT_Normal,,,,,OZssNjTqLk6wjmeH9FlFxg,8niYSbud/Ea61EPZ+IcCHQ,,,N,0,0,,,2013-10-09 11:38,2013-11-11 17:02,admin,admin
181,82991,1296,10958,1422,1,0,N,N,N,CP_Drtn,TT_Task,DT_FixedDUR2,RV_OK,TK_NotStart,BEW/MO/NC/1200,Obtaining NOC from Ministry of Housing,,5002,0,189,0,0,0,189,0,0,0,,,,2015-01-27 15:00,2015-02-17 15:00,,2013-07-21 07:00,2013-08-10 17:00,2013-07-21 07:00,2013-08-10 17:00,2013-07-21 07:00,2013-08-10 17:00,,2015-01-27 15:00,2015-02-17 15:00,,PT_Normal,,,,,tetVWoBDmUeiY+o9HVNnFA,vF9NElbjtE6CVuXSJnVBGA,,,N,0,0,,,2013-10-09 11:38,2013-11-11 17:02,admin,admin
182,82992,1296,10958,1422,1,0,N,N,N,CP_Drtn,TT_Task,DT_FixedDUR2,RV_OK,TK_NotStart,BEW/MO/NC/1210,Obtaining NOC from Environment,,5002,0,189,0,0,0,189,0,0,0,,,,2015-01-27 15:00,2015-02-17 15:00,,2013-07-21 07:00,2013-08-10 17:00,2013-07-21 07:00,2013-08-10 17:00,2013-07-21 07:00,2013-08-10 17:00,,2015-01-27 15:00,2015-02-17 15:00,,PT_Normal,,,,,3M48a9o6GEeZJnCaMRmwiA,ZN1nICdpw0WytYFJOE5C2Q,,,N,0,0,,,2013-10-09 11:38,2013-11-11 17:02,admin,admin
183,82993,1296,10972,1422,1,0,N,N,N,CP_Drtn,TT_Task,DT_FixedDUR2,RV_OK,TK_NotStart,BEW/MO/EF/1050,Aproval of Site Mobilisation drawings,,5267,252,63,0,0,0,63,0,0,0,,,,2015-03-03 09:00,2015-03-10 09:00,,2013-07-26 07:00,2013-08-01 17:00,2013-07-26 07:00,2013-08-01 17:00,2013-07-26 07:00,2013-08-01 17:00,,2015-03-03 09:00,2015-03-10 09:00,,PT_Normal,,,,,/B1shleHyE2utFmkAc+byQ,,,,N,0,0,,,2013-10-09 11:38,2013-11-11 22:09,admin,admin
184,82994,1296,10962,1423,1,0,N,N,N,CP_Drtn,TT_Task,DT_FixedDUR2,RV_OK,TK_NotStart,BEW/PR/DS/1010,Soil Investingation and Report  1,,3134.5,0,189,0,0,0,189,0,0,0,,,,2015-02-12 09:00,2015-03-15 09:00,,2013-09-19 16:30,2013-10-22 15:30,2013-09-19 16:30,2013-10-22 15:30,2013-09-19 16:30,2013-10-22 15:30,,2015-02-12 09:00,2015-03-15 09:00,,PT_Normal,,,,,PfVwFL4GV0qGLdOCgeDD6Q,,,,N,0,0,,,2013-10-09 11:38,2013-11-11 22:09,admin,admin
185,82995,1296,10967,1423,1,0,N,N,N,CP_Drtn,TT_Task,DT_FixedDUR2,RV_OK,TK_NotStart,BEW/PR/FC/1010,Fencing the Camp area,2553,3436.5,5,40,0,160,117,40,0,0,0,,,,2015-03-03 15:00,2015-03-10 09:00,,2013-08-25 07:00,2013-08-29 11:00,2013-08-25 07:00,2013-08-29 11:00,2013-08-25 07:00,2013-08-29 11:00,,2015-03-03 15:00,2015-03-10 09:00,,PT_Normal,,,,,x4WHhBA0S0yfBDLmUK5ILQ,,,,N,0,0,,,2013-10-09 11:38,2013-11-12 18:17,admin,admin
186,82996,1296,10962,1423,1,0,N,N,N,CP_Drtn,TT_Task,DT_FixedDUR2,RV_OK,TK_NotStart,BEW/PR/DS/1000,Digging Confirmatory Boreholes No 1 to 25,2511,3134.5,0,135,0,135,18,135,0,0,0,,,,2015-01-22 09:00,2015-02-12 09:00,,2013-09-01 07:00,2013-09-19 16:30,2013-09-01 07:00,2013-09-19 16:30,2013-09-01 07:00,2013-09-19 16:30,,2015-01-22 09:00,2015-02-12 09:00,,PT_Normal,,,,,CjWsSITwOkaxo+LLTAfwGg,,,,N,0,0,,,2013-10-09 11:38,2013-11-12 18:15,admin,admin
187,82997,1296,10962,1423,1,0,N,N,N,CP_Drtn,TT_Task,DT_FixedDUR2,RV_OK,TK_NotStart,BEW/PR/DS/1020,Digging Confirmatory Boreholes No 26 - 50,2511,4149.5,0,135,0,135,18,135,0,0,0,,,,2015-07-29 07:00,2015-08-18 17:00,,2013-09-19 16:30,2013-10-10 16:30,2013-09-19 16:30,2013-10-10 16:30,2013-09-19 16:30,2013-10-10 16:30,,2015-07-29 07:00,2015-08-18 17:00,,PT_Normal,,,,,r4TLviqpOkqCeGFSEU/CxQ,,,,N,0,0,,,2013-10-09 11:38,2013-11-12 18:15,admin,admin
188,82998,1296,10962,1423,1,0,N,N,N,CP_Drtn,TT_Task,DT_FixedDUR2,RV_OK,TK_NotStart,BEW/PR/DS/1030,Digging Confirmatory Boreholes No 51 to 75,2511,4149.5,0,135,0,135,18,135,0,0,0,,,,2015-08-19 07:00,2015-09-08 17:00,,2013-10-10 16:30,2013-11-04 15:30,2013-10-10 16:30,2013-11-04 15:30,2013-10-10 16:30,2013-11-04 15:30,,2015-08-19 07:00,2015-09-08 17:00,,PT_Normal,,,,,ssr8m9rVJkGh9XqStmyeEg,,,,N,0,0,,,2013-10-09 11:38,2013-11-12 18:15,admin,admin
189,82999,1296,10963,1422,1,0,N,N,N,CP_Drtn,TT_Task,DT_FixedDUR2,RV_OK,TK_NotStart,BEW/MO/IS/1000,Submission of Soil Investigation subcontractor,,4592,0,126,0,0,0,126,0,0,0,,,,2014-12-08 09:00,2014-12-22 09:00,,2013-07-16 08:00,2013-07-29 17:00,2013-07-16 08:00,2013-07-29 17:00,2013-07-16 08:00,2013-07-29 17:00,,2014-12-08 09:00,2014-12-22 09:00,,PT_Normal,,,,,9bTYJD3yckGUH3A90C6Dtw,,,,N,0,0,,,2013-10-09 11:38,2013-11-11 22:09,admin,admin
190,83000,1296,10963,1422,1,0,N,N,N,CP_Drtn,TT_Task,DT_FixedDUR2,RV_OK,TK_NotStart,BEW/MO/IS/1020,Approval of Soil Investigator by Consultant,,4592,0,189,0,0,0,189,0,0,0,,,,2014-12-22 09:00,2015-01-12 09:00,,2013-07-30 07:00,2013-08-19 17:00,2013-07-30 07:00,2013-08-19 17:00,2013-07-30 07:00,2013-08-19 17:00,,2014-12-22 09:00,2015-01-12 09:00,,PT_Normal,,,,,3j129B/1cka0KT5O8sG7UA,,,,N,0,0,,,2013-10-09 11:38,2013-11-11 22:09,admin,admin
191,83001,1296,10963,1422,1,0,N,N,N,CP_Drtn,TT_Task,DT_FixedDUR2,RV_OK,TK_NotStart,BEW/MO/IS/1010,Receiving Contract Drawings from Designer,,1349,360,63,0,0,0,63,0,0,0,,,,2013-12-12 16:00,2013-12-19 16:00,,2013-07-16 08:00,2013-07-22 17:00,2013-07-16 08:00,2013-07-22 17:00,2013-07-16 08:00,2013-07-22 17:00,,2013-12-12 16:00,2013-12-19 16:00,,PT_Normal,,,,,LPoexwXw0UObzocLTlK1HQ,,,,N,0,0,,,2013-10-09 11:38,2013-11-12 11:41,admin,admin
192,83002,1296,10963,1422,1,0,N,N,N,CP_Drtn,TT_Task,DT_FixedDUR2,RV_OK,TK_NotStart,BEW/MO/IS/1030,Receivng approvals of the formats submitted through PQP,,4808,234,63,0,0,0,63,0,0,0,,,,2015-01-15 09:00,2015-01-22 09:00,,2013-07-30 07:00,2013-08-05 17:00,2013-07-30 07:00,2013-08-05 17:00,2013-07-30 07:00,2013-08-05 17:00,,2015-01-15 09:00,2015-01-22 09:00,,PT_Normal,,,,,TWd1Ik21mUKj8nLOTd6vuA,,,,N,0,0,,,2013-10-09 11:38,2013-11-11 22:09,admin,admin
193,83003,1296,10963,1422,1,0,N,N,N,CP_Drtn,TT_Task,DT_FixedDUR2,RV_OK,TK_NotStart,BEW/MO/IS/1040,Receiving Borehole Drawings,,4592,18,90,0,0,0,90,0,0,0,,,,2015-01-12 09:00,2015-01-22 09:00,,2013-08-20 07:00,2013-08-29 17:00,2013-08-20 07:00,2013-08-29 17:00,2013-08-20 07:00,2013-08-29 17:00,,2015-01-12 09:00,2015-01-22 09:00,,PT_Normal,,,,,M7v9RIO12kiJzQxUkvV+Ag,,,,N,0,0,,,2013-10-09 11:38,2013-11-11 22:09,admin,admin
194,83004,1296,10962,1423,1,0,N,N,N,CP_Drtn,TT_Task,DT_FixedDUR2,RV_OK,TK_NotStart,BEW/PR/DS/1050,Digging Confirmatory Boreholes No 76 to 100,2511,4149.5,0,135,0,135,18,135,0,0,0,,,,2015-09-09 07:00,2015-09-29 17:00,,2013-11-04 15:30,2013-11-27 15:30,2013-11-04 15:30,2013-11-27 15:30,2013-11-04 15:30,2013-11-27 15:30,,2015-09-09 07:00,2015-09-29 17:00,,PT_Normal,,,,,6zewZqcffU2EcqZRus6Q2w,,,,N,0,0,,,2013-10-09 11:38,2013-11-12 18:15,admin,admin
195,83005,1296,10962,1423,1,0,N,N,N,CP_Drtn,TT_Task,DT_FixedDUR2,RV_OK,TK_NotStart,BEW/PR/DS/1070,Digging Confirmatory Boreholes No 101 to 125,2511,4743.5,0,135,0,135,18,135,0,0,0,,,,2016-01-05 07:00,2016-01-25 17:00,,2013-11-27 15:30,2013-12-18 15:30,2013-11-27 15:30,2013-12-18 15:30,2013-11-27 15:30,2013-12-18 15:30,,2016-01-05 07:00,2016-01-25 17:00,,PT_Normal,,,,,8/JA2/WQc0mCYSHYXK7Wdg,,,,N,0,0,,,2013-10-09 11:38,2013-11-12 18:15,admin,admin
196,83006,1296,10962,1423,1,0,N,N,N,CP_Drtn,TT_Task,DT_FixedDUR2,RV_OK,TK_NotStart,BEW/PR/DS/1090,Digging Confirmatory Boreholes No 126 to 146,2511,4743.5,0,135,0,135,18,135,0,0,0,,,,2016-01-26 07:00,2016-02-15 17:00,,2013-12-18 15:30,2014-01-09 15:30,2013-12-18 15:30,2014-01-09 15:30,2013-12-18 15:30,2014-01-09 15:30,,2016-01-26 07:00,2016-02-15 17:00,,PT_Normal,,,,,27BWl2HpIkyUpY/uWcvORA,,,,N,0,0,,,2013-10-09 11:38,2013-11-12 18:16,admin,admin
197,83007,1296,10968,1422,1,0,N,N,N,CP_Drtn,TT_Task,DT_FixedDUR2,RV_OK,TK_NotStart,BEW/PR/FC/1040,Maintenance of Engg Off Type 1,,0,0,9855,0,0,0,9855,0,0,0,,,,2013-08-30 07:00,2016-08-28 17:00,,2013-08-30 07:00,2016-08-28 17:00,2013-08-30 07:00,2016-08-28 17:00,2013-08-30 07:00,2016-08-28 17:00,,2013-08-30 07:00,2016-08-28 17:00,,PT_Normal,,,,,84N9EyzsKUWxQpiiZQCxBg,,,,Y,0,0,,,2013-10-09 11:38,2013-11-12 11:41,admin,admin
198,83008,1296,10968,1422,1,0,N,N,N,CP_Drtn,TT_Task,DT_FixedDUR2,RV_OK,TK_NotStart,BEW/PR/FC/1050,Maintenance of Engg Off Type 2,,0,0,9855,0,0,0,9855,0,0,0,,,,2013-08-30 07:00,2016-08-28 17:00,,2013-08-30 07:00,2016-08-28 17:00,2013-08-30 07:00,2016-08-28 17:00,2013-08-30 07:00,2016-08-28 17:00,,2013-08-30 07:00,2016-08-28 17:00,,PT_Normal,,,,,sMoEbe98vka0ExnLDb9xCw,,,,Y,0,0,,,2013-10-09 11:38,2013-11-12 11:41,admin,admin
199,83009,1296,10968,1422,1,0,N,N,N,CP_Drtn,TT_Task,DT_FixedDUR2,RV_OK,TK_NotStart,BEW/PR/FC/1060,Provision of Survey Equipments,,0,0,9855,0,0,0,9855,0,0,0,,,,2013-08-30 07:00,2016-08-28 17:00,,2013-08-30 07:00,2016-08-28 17:00,2013-08-30 07:00,2016-08-28 17:00,2013-08-30 07:00,2016-08-28 17:00,,2013-08-30 07:00,2016-08-28 17:00,,PT_Normal,,,,,zRrDyeNwUU6dWaRrjMgptg,,,,Y,0,0,,,2013-10-09 11:38,2013-11-12 11:41,admin,admin
200,83010,1296,10968,1422,1,0,N,N,N,CP_Drtn,TT_Task,DT_FixedDUR2,RV_OK,TK_NotStart,BEW/PR/FC/1070,Maintenance of Survey Equipments,,0,0,9855,0,0,0,9855,0,0,0,,,,2013-08-30 07:00,2016-08-28 17:00,,2013-08-30 07:00,2016-08-28 17:00,2013-08-30 07:00,2016-08-28 17:00,2013-08-30 07:00,2016-08-28 17:00,,2013-08-30 07:00,2016-08-28 17:00,,PT_Normal,,,,,K5GDoZ8stU2OTo8VyAonfg,,,,Y,0,0,,,2013-10-09 11:38,2013-11-12 11:41,admin,admin
201,83011,1296,10968,1422,1,0,N,N,N,CP_Phys,TT_Task,DT_FixedDUR2,RV_OK,TK_NotStart,BEW/PR/FC/1080,Provision of Engineers Office Type 2,2511,0,0,9855,0,124.999999,180,9855,0,0,0,,,,2013-08-30 07:00,2016-08-28 17:00,,2013-08-30 07:00,2016-08-28 17:00,2013-08-30 07:00,2016-08-28 17:00,2013-08-30 07:00,2016-08-28 17:00,,2013-08-30 07:00,2016-08-28 17:00,,PT_Normal,,,,,ezFoJkxkDU6vTt28Fb/TBg,lXi+UfQDTheFfPqWD0irNw,,,Y,0,0,,,2013-10-09 11:38,2013-11-12 11:41,admin,admin
202,83012,1296,10968,1422,1,0,N,N,N,CP_Drtn,TT_Task,DT_FixedDUR2,RV_OK,TK_NotStart,BEW/PR/FC/1090,Provision of Engineers Office Type 1,,0,0,9855,0,0,0,9855,0,0,0,,,,2013-08-30 07:00,2016-08-28 17:00,,2013-08-30 07:00,2016-08-28 17:00,2013-08-30 07:00,2016-08-28 17:00,2013-08-30 07:00,2016-08-28 17:00,,2013-08-30 07:00,2016-08-28 17:00,,PT_Normal,,,,,JSmNoeI9HUiCH9MiHfnBAg,DRWSLfKuIUKLiL6CrUe9XQ,,,Y,0,0,,,2013-10-09 11:38,2013-11-12 11:41,admin,admin
203,83013,1296,10968,1422,1,0,N,N,N,CP_Drtn,TT_Task,DT_FixedDUR2,RV_OK,TK_NotStart,BEW/PR/FC/1100,Provision of Engr Accomodation Type 1,,0,0,9855,0,0,0,9855,0,0,0,,,,2013-08-30 07:00,2016-08-28 17:00,,2013-08-30 07:00,2016-08-28 17:00,2013-08-30 07:00,2016-08-28 17:00,2013-08-30 07:00,2016-08-28 17:00,,2013-08-30 07:00,2016-08-28 17:00,,PT_Normal,,,,,1WbeFJPiqEqZq8lBvzzumA,,,,Y,0,0,,,2013-10-09 11:38,2013-11-12 11:41,admin,admin
204,83014,1296,10968,1422,1,0,N,N,N,CP_Drtn,TT_Task,DT_FixedDUR2,RV_OK,TK_NotStart,BEW/PR/FC/1110,Provision of Engr Accomodation Type 2 QS,,0,0,9855,0,0,0,9855,0,0,0,,,,2013-08-30 07:00,2016-08-28 17:00,,2013-08-30 07:00,2016-08-28 17:00,2013-08-30 07:00,2016-08-28 17:00,2013-08-30 07:00,2016-08-28 17:00,,2013-08-30 07:00,2016-08-28 17:00,,PT_Normal,,,,,VkLYHo9glEqz/6d3TygDVg,,,,Y,0,0,,,2013-10-09 11:38,2013-11-12 11:41,admin,admin
205,83015,1296,10968,1422,1,0,N,N,N,CP_Drtn,TT_Task,DT_FixedDUR2,RV_OK,TK_NotStart,BEW/PR/FC/1120,Provision of Engr Accomodation Type 2,,0,0,9855,0,0,0,9855,0,0,0,,,,2013-08-30 07:00,2016-08-28 17:00,,2013-08-30 07:00,2016-08-28 17:00,2013-08-30 07:00,2016-08-28 17:00,2013-08-30 07:00,2016-08-28 17:00,,2013-08-30 07:00,2016-08-28 17:00,,PT_Normal,,,,,8+6/YeCVGEG0i/saSxoOFg,,,,Y,0,0,,,2013-10-09 11:38,2013-11-12 11:41,admin,admin
206,83016,1296,10968,1422,1,0,N,N,N,CP_Drtn,TT_Task,DT_FixedDUR2,RV_OK,TK_NotStart,BEW/PR/FC/1130,Provision of Engr Accomodation Type 3,,0,0,9855,0,0,0,9855,0,0,0,,,,2013-08-30 07:00,2016-08-28 17:00,,2013-08-30 07:00,2016-08-28 17:00,2013-08-30 07:00,2016-08-28 17:00,2013-08-30 07:00,2016-08-28 17:00,,2013-08-30 07:00,2016-08-28 17:00,,PT_Normal,,,,,SWquRYNCc0ydK1A6SBoW1Q,,,,Y,0,0,,,2013-10-09 11:38,2013-11-12 11:41,admin,admin
207,83017,1296,10968,1422,1,0,N,N,N,CP_Drtn,TT_Task,DT_FixedDUR2,RV_OK,TK_NotStart,BEW/PR/FC/1140,Provision of Engr Accomodation Type 4,,0,0,9855,0,0,0,9855,0,0,0,,,,2013-08-30 07:00,2016-08-28 17:00,,2013-08-30 07:00,2016-08-28 17:00,2013-08-30 07:00,2016-08-28 17:00,2013-08-30 07:00,2016-08-28 17:00,,2013-08-30 07:00,2016-08-28 17:00,,PT_Normal,,,,,snAwkHOJHEKXsZnUvOIqsA,,,,Y,0,0,,,2013-10-09 11:38,2013-11-12 11:41,admin,admin
208,83018,1296,10968,1422,1,0,N,N,N,CP_Drtn,TT_Task,DT_FixedDUR2,RV_OK,TK_NotStart,BEW/PR/FC/1150,Maintanance of Engr Accomodation Type 1,,0,0,9855,0,0,0,9855,0,0,0,,,,2013-08-30 07:00,2016-08-28 17:00,,2013-08-30 07:00,2016-08-28 17:00,2013-08-30 07:00,2016-08-28 17:00,2013-08-30 07:00,2016-08-28 17:00,,2013-08-30 07:00,2016-08-28 17:00,,PT_Normal,,,,,qVz6YTKnkUGuxpt1sDSo+w,,,,Y,0,0,,,2013-10-09 11:38,2013-11-12 11:41,admin,admin
209,83019,1296,10968,1422,1,0,N,N,N,CP_Drtn,TT_Task,DT_FixedDUR2,RV_OK,TK_NotStart,BEW/PR/FC/1160,Maintanance of Engr Accomodation Type 2 QS,,0,0,9855,0,0,0,9855,0,0,0,,,,2013-08-30 07:00,2016-08-28 17:00,,2013-08-30 07:00,2016-08-28 17:00,2013-08-30 07:00,2016-08-28 17:00,2013-08-30 07:00,2016-08-28 17:00,,2013-08-30 07:00,2016-08-28 17:00,,PT_Normal,,,,,CXBJ/mtCe0+S3uH40N8BIA,,,,Y,0,0,,,2013-10-09 11:38,2013-11-12 11:41,admin,admin
210,83020,1296,10968,1422,1,0,N,N,N,CP_Drtn,TT_Task,DT_FixedDUR2,RV_OK,TK_NotStart,BEW/PR/FC/1170,Maintanance of Engr Accomodation Type 2,,0,0,9855,0,0,0,9855,0,0,0,,,,2013-08-30 07:00,2016-08-28 17:00,,2013-08-30 07:00,2016-08-28 17:00,2013-08-30 07:00,2016-08-28 17:00,2013-08-30 07:00,2016-08-28 17:00,,2013-08-30 07:00,2016-08-28 17:00,,PT_Normal,,,,,v1tE1K9QHUC3mnN648S2rA,,,,Y,0,0,,,2013-10-09 11:38,2013-11-12 11:41,admin,admin
211,83021,1296,10968,1422,1,0,N,N,N,CP_Drtn,TT_Task,DT_FixedDUR2,RV_OK,TK_NotStart,BEW/PR/FC/1180,Maintanance of Engr Accomodation Type 3,,0,0,9855,0,0,0,9855,0,0,0,,,,2013-08-30 07:00,2016-08-28 17:00,,2013-08-30 07:00,2016-08-28 17:00,2013-08-30 07:00,2016-08-28 17:00,2013-08-30 07:00,2016-08-28 17:00,,2013-08-30 07:00,2016-08-28 17:00,,PT_Normal,,,,,m7UB6Xgr+kmwaEZtq/f19A,,,,Y,0,0,,,2013-10-09 11:38,2013-11-12 11:41,admin,admin
212,83022,1296,10968,1422,1,0,N,N,N,CP_Drtn,TT_Task,DT_FixedDUR2,RV_OK,TK_NotStart,BEW/PR/FC/1190,Maintanance of Engr Accomodation Type 4,,0,0,9855,0,0,0,9855,0,0,0,,,,2013-08-30 07:00,2016-08-28 17:00,,2013-08-30 07:00,2016-08-28 17:00,2013-08-30 07:00,2016-08-28 17:00,2013-08-30 07:00,2016-08-28 17:00,,2013-08-30 07:00,2016-08-28 17:00,,PT_Normal,,,,,naTHb4sxp0OYPr45X04CqA,,,,Y,0,0,,,2013-10-09 11:38,2013-11-12 11:41,admin,admin
213,83023,1296,10968,1422,1,0,N,N,N,CP_Drtn,TT_Task,DT_FixedDUR2,RV_OK,TK_NotStart,BEW/PR/FC/1200,Provison of Site Lab,,0,0,9855,0,0,0,9855,0,0,0,,,,2013-08-30 07:00,2016-08-28 17:00,,2013-08-30 07:00,2016-08-28 17:00,2013-08-30 07:00,2016-08-28 17:00,2013-08-30 07:00,2016-08-28 17:00,,2013-08-30 07:00,2016-08-28 17:00,,PT_Normal,,,,,MxdMecBk0EetMuMW5H4o5A,,,,Y,0,0,,,2013-10-09 11:38,2013-11-12 11:41,admin,admin
214,83024,1296,10968,1422,1,0,N,N,N,CP_Drtn,TT_Task,DT_FixedDUR2,RV_OK,TK_NotStart,BEW/PR/FC/1210,Maintanance of Site Lab,,0,0,9855,0,0,0,9855,0,0,0,,,,2013-08-30 07:00,2016-08-28 17:00,,2013-08-30 07:00,2016-08-28 17:00,2013-08-30 07:00,2016-08-28 17:00,2013-08-30 07:00,2016-08-28 17:00,,2013-08-30 07:00,2016-08-28 17:00,,PT_Normal,,,,,wmTYbGTRlEGQaZiX7+zvqA,,,,Y,0,0,,,2013-10-09 11:38,2013-11-12 11:41,admin,admin
215,83025,1296,10968,1422,1,0,N,N,N,CP_Drtn,TT_Task,DT_FixedDUR2,RV_OK,TK_NotStart,BEW/PR/FC/1220,Maintanance of Traffic,,0,0,9855,0,0,0,9855,0,0,0,,,,2013-08-30 07:00,2016-08-28 17:00,,2013-08-30 07:00,2016-08-28 17:00,2013-08-30 07:00,2016-08-28 17:00,2013-08-30 07:00,2016-08-28 17:00,,2013-08-30 07:00,2016-08-28 17:00,,PT_Normal,,,,,O9lXCdFpgkGMRV3KY8xcYw,,,,Y,0,0,,,2013-10-09 11:38,2013-11-12 11:41,admin,admin
216,83026,1296,10968,1422,1,0,N,N,N,CP_Drtn,TT_Task,DT_FixedDUR2,RV_OK,TK_NotStart,BEW/PR/FC/1230,Provision of Photographs,,0,0,9855,0,0,0,9855,0,0,0,,,,2013-08-30 07:00,2016-08-28 17:00,,2013-08-30 07:00,2016-08-28 17:00,2013-08-30 07:00,2016-08-28 17:00,2013-08-30 07:00,2016-08-28 17:00,,2013-08-30 07:00,2016-08-28 17:00,,PT_Normal,,,,,sSyGMKz+sECuE7DYqDRABw,,,,Y,0,0,,,2013-10-09 11:38,2013-11-12 11:41,admin,admin
217,83027,1296,10968,1422,1,0,N,N,N,CP_Drtn,TT_Task,DT_FixedDUR2,RV_OK,TK_NotStart,BEW/PR/FC/1240,Provision of Video,,0,0,9855,0,0,0,9855,0,0,0,,,,2013-08-30 07:00,2016-08-28 17:00,,2013-08-30 07:00,2016-08-28 17:00,2013-08-30 07:00,2016-08-28 17:00,2013-08-30 07:00,2016-08-28 17:00,,2013-08-30 07:00,2016-08-28 17:00,,PT_Normal,,,,,LzUuGkKXeUy0+ALwXvWo9w,,,,Y,0,0,,,2013-10-09 11:38,2013-11-12 11:41,admin,admin
218,83028,1296,10974,1423,1,0,N,N,N,CP_Drtn,TT_Task,DT_FixedDUR2,RV_OK,TK_NotStart,BEW/PR/AB/1040,As Built Drawing Submission Part 1,,3134.5,0,216,0,0,0,216,0,0,0,,,,2016-07-11 07:00,2016-08-11 17:00,,2015-02-18 14:30,2015-03-24 14:30,2015-02-18 14:30,2015-03-24 14:30,2015-02-18 14:30,2015-03-24 14:30,,2016-07-11 07:00,2016-08-11 17:00,,PT_Normal,,,,,wycqyLduv0Cdw019Y20zyw,,,,N,0,0,,,2013-10-09 11:38,2013-11-12 11:04,admin,admin
219,83029,1296,10987,1422,1,0,N,N,N,CP_Drtn,TT_Task,DT_FixedDUR2,RV_OK,TK_NotStart,BEW/PR/FC/1310,Supply and erection of commemorative plaque,,0,0,40,0,0,0,40,0,0,0,,,,2016-08-24 13:00,2016-08-28 17:00,,2016-08-24 13:00,2016-08-28 17:00,2016-08-24 13:00,2016-08-28 17:00,2016-08-24 13:00,2016-08-28 17:00,,2016-08-24 13:00,2016-08-28 17:00,,PT_Normal,,,,,MLzOa4D6fkqh4qHgfY1A7w,,,,Y,0,0,,,2013-10-15 23:03,2013-11-12 11:41,admin,admin
220,83030,1296,10987,1422,1,0,N,N,N,CP_Drtn,TT_Task,DT_FixedDUR2,RV_OK,TK_NotStart,BEW/PR/FC/1320,Opening ceremony including all facilities,,0,0,40,0,0,0,40,0,0,0,,,,2016-08-24 13:00,2016-08-28 17:00,,2016-08-24 13:00,2016-08-28 17:00,2016-08-24 13:00,2016-08-28 17:00,2016-08-24 13:00,2016-08-28 17:00,,2016-08-24 13:00,2016-08-28 17:00,,PT_Normal,,,,,6on0D3gWEEKvVNwTHZsk5g,,,,Y,0,0,,,2013-10-15 23:04,2013-11-12 11:41,admin,admin
221,83031,1296,10987,1422,1,0,N,N,N,CP_Drtn,TT_Task,DT_FixedDUR2,RV_OK,TK_NotStart,BEW/PR/FC/1330,Removal of Project Sign Board,2511,0,0,40,0,40,40,40,0,0,0,,,,2016-08-24 13:00,2016-08-28 17:00,,2016-08-24 13:00,2016-08-28 17:00,2016-08-24 13:00,2016-08-28 17:00,2016-08-24 13:00,2016-08-28 17:00,,2016-08-24 13:00,2016-08-28 17:00,,PT_Normal,,,,,DwHGg6JkTEGBfEt+oHJyHA,,,,Y,0,0,,,2013-10-15 23:04,2013-11-12 18:20,admin,admin
222,83032,1296,10968,1422,1,0,N,N,N,CP_Drtn,TT_Task,DT_FixedDUR2,RV_OK,TK_NotStart,BEW/PR/FC/1250,Maintenance of Project Sign Board,,0,0,9855,0,0,0,9857.06666666667,0,0,0,,,,2013-08-30 07:00,2016-08-28 17:00,,2013-08-30 07:00,2016-08-28 17:00,2013-08-30 07:00,2016-08-28 17:00,2013-08-30 07:00,2016-08-29 09:04,,2013-08-30 07:00,2016-08-28 17:00,,PT_Normal,,,,,n4yzk6ssdkCNBbmvLYUXIw,,,,Y,0,0,,,2013-10-15 23:17,2013-11-12 11:41,admin,admin
223,83033,1296,10962,1423,1,0,N,N,N,CP_Drtn,TT_Task,DT_FixedDUR2,RV_OK,TK_NotStart,BEW/PR/DS/1040,Soil Investingation and Report  2,,4419.5,0,189,0,0,0,189,0,0,0,,,,2015-09-30 07:00,2015-10-29 17:00,,2013-10-10 16:30,2013-11-13 15:30,2013-10-10 16:30,2013-11-13 15:30,2013-10-10 16:30,2013-11-13 15:30,,2015-09-30 07:00,2015-10-29 17:00,,PT_Normal,,,,,bjwjzrdp70qpLaSmxelJOg,,,,N,0,0,,,2013-10-15 23:47,2013-11-11 17:01,admin,admin
224,83034,1296,10962,1423,1,0,N,N,N,CP_Drtn,TT_Task,DT_FixedDUR2,RV_OK,TK_NotStart,BEW/PR/DS/1060,Soil Investingation and Report  3,,4284.5,0,189,0,0,0,189,0,0,0,,,,2015-09-30 07:00,2015-10-29 17:00,,2013-11-04 15:30,2013-12-05 15:30,2013-11-04 15:30,2013-12-05 15:30,2013-11-04 15:30,2013-12-05 15:30,,2015-09-30 07:00,2015-10-29 17:00,,PT_Normal,,,,,MH4QSgfn1U6pz0hecdnbIQ,,,,N,0,0,,,2013-10-15 23:48,2013-11-11 17:01,admin,admin
225,83035,1296,10962,1423,1,0,N,N,N,CP_Drtn,TT_Task,DT_FixedDUR2,RV_OK,TK_NotStart,BEW/PR/DS/1080,Soil Investingation and Report  4,,4149.5,0,189,0,0,0,189,0,0,0,,,,2015-09-30 07:00,2015-10-29 17:00,,2013-11-27 15:30,2013-12-26 15:30,2013-11-27 15:30,2013-12-26 15:30,2013-11-27 15:30,2013-12-26 15:30,,2015-09-30 07:00,2015-10-29 17:00,,PT_Normal,,,,,yf6TwbIGlUC22ry2oqSsKw,,,,N,0,0,,,2013-10-15 23:48,2013-11-11 17:01,admin,admin
226,83036,1296,10962,1423,1,0,N,N,N,CP_Drtn,TT_Task,DT_FixedDUR2,RV_OK,TK_NotStart,BEW/PR/DS/1100,Soil Investingation and Report  5,,4878.5,0,189,0,0,0,189,0,0,0,,,,2016-02-16 07:00,2016-03-15 17:00,,2013-12-18 15:30,2014-01-20 15:30,2013-12-18 15:30,2014-01-20 15:30,2013-12-18 15:30,2014-01-20 15:30,,2016-02-16 07:00,2016-03-15 17:00,,PT_Normal,,,,,noE7cPe2cUmo45h/rhCv/g,,,,N,0,0,,,2013-10-15 23:48,2013-11-11 17:01,admin,admin
227,83037,1296,10962,1423,1,0,N,N,N,CP_Drtn,TT_Task,DT_FixedDUR2,RV_OK,TK_NotStart,BEW/PR/DS/1110,Soil Investingation and Report  6,,4743.5,0,189,0,0,0,189,0,0,0,,,,2016-02-16 07:00,2016-03-15 17:00,,2014-01-09 15:30,2014-02-10 15:30,2014-01-09 15:30,2014-02-10 15:30,2014-01-09 15:30,2014-02-10 15:30,,2016-02-16 07:00,2016-03-15 17:00,,PT_Normal,,,,,2/KR2Q1QKkq+AF5MzNY4FA,,,,N,0,0,,,2013-10-15 23:48,2013-11-11 17:01,admin,admin
228,83038,1296,10979,1422,1,0,N,N,N,CP_Drtn,TT_Task,DT_FixedDUR2,RV_OK,TK_NotStart,BEW/DE/DS/1110,Receiving Pile Drawings 1,,4575.5,0,63,0,0,0,63,0,0,0,,,,2015-03-15 09:00,2015-03-22 09:00,,2013-10-22 15:30,2013-10-29 15:30,2013-10-22 15:30,2013-10-29 15:30,2013-10-22 15:30,2013-10-29 15:30,,2015-03-15 09:00,2015-03-22 09:00,,PT_Normal,,,,,BhqrKiT1fUSwrnyPCbQWhw,,,,N,0,0,,,2013-10-15 23:52,2013-11-11 22:09,admin,admin
229,83039,1296,10979,1422,1,0,N,N,N,CP_Drtn,TT_Task,DT_FixedDUR2,RV_OK,TK_NotStart,BEW/DE/DS/1140,Receiving Pile Drawings 2,,6454.5,387,63,0,0,0,63,0,0,0,,,,2015-11-01 07:00,2015-11-07 17:00,,2013-11-13 15:30,2013-11-20 15:30,2013-11-13 15:30,2013-11-20 15:30,2013-11-13 15:30,2013-11-20 15:30,,2015-11-01 07:00,2015-11-07 17:00,,PT_Normal,,,,,SZhB5g2+G0KlqqpYR7/2qw,FdJ3+bXCEEqXcgvGXDsBnA,,,N,0,0,,,2013-10-15 23:55,2013-11-11 17:01,admin,admin
230,83040,1296,10979,1422,1,0,N,N,N,CP_Drtn,TT_Task,DT_FixedDUR2,RV_OK,TK_NotStart,BEW/DE/DS/1170,Receiving Pile Drawings 3,,6256.5,189,63,0,0,0,63,0,0,0,,,,2015-11-01 07:00,2015-11-07 17:00,,2013-12-05 15:30,2013-12-12 15:30,2013-12-05 15:30,2013-12-12 15:30,2013-12-05 15:30,2013-12-12 15:30,,2015-11-01 07:00,2015-11-07 17:00,,PT_Normal,,,,,fCIc1u6JfESkLt3erTjf8g,Tva0oTHt+EyrrKahRo1tUA,,,N,0,0,,,2013-10-15 23:55,2013-11-11 17:01,admin,admin
231,83041,1296,10979,1422,1,0,N,N,N,CP_Drtn,TT_Task,DT_FixedDUR2,RV_OK,TK_NotStart,BEW/DE/DS/1200,Receiving Pile Drawings 4,,6067.5,0,63,0,0,0,63,0,0,0,,,,2015-11-01 07:00,2015-11-07 17:00,,2013-12-26 15:30,2014-01-02 15:30,2013-12-26 15:30,2014-01-02 15:30,2013-12-26 15:30,2014-01-02 15:30,,2015-11-01 07:00,2015-11-07 17:00,,PT_Normal,,,,,ywu7MhNLUEmOrIKwpu8Gtg,Tva0oTHt+EyrrKahRo1tUA,,,N,0,0,,,2013-10-15 23:55,2013-11-11 17:01,admin,admin
232,83042,1296,10979,1422,1,0,N,N,N,CP_Drtn,TT_Task,DT_FixedDUR2,RV_OK,TK_NotStart,BEW/DE/DS/1210,Receiving Pile Drawings 5,,7066.5,189,63,0,0,0,63,0,0,0,,,,2016-03-16 07:00,2016-03-22 17:00,,2014-01-20 15:30,2014-01-27 15:30,2014-01-20 15:30,2014-01-27 15:30,2014-01-20 15:30,2014-01-27 15:30,,2016-03-16 07:00,2016-03-22 17:00,,PT_Normal,,,,,GPDC+K1H2E+zS4lcAAjNCw,Tva0oTHt+EyrrKahRo1tUA,,,N,0,0,,,2013-10-15 23:55,2013-11-11 17:01,admin,admin
233,83043,1296,10979,1422,1,0,N,N,N,CP_Drtn,TT_Task,DT_FixedDUR2,RV_OK,TK_NotStart,BEW/DE/DS/1230,Receiving Pile Drawings 6,,6877.5,0,63,0,0,0,63,0,0,0,,,,2016-03-16 07:00,2016-03-22 17:00,,2014-02-10 15:30,2014-02-17 15:30,2014-02-10 15:30,2014-02-17 15:30,2014-02-10 15:30,2014-02-17 15:30,,2016-03-16 07:00,2016-03-22 17:00,,PT_Normal,,,,,/bJehhiilUWF2saKofeXrA,Tva0oTHt+EyrrKahRo1tUA,,,N,0,0,,,2013-10-15 23:55,2013-11-11 17:01,admin,admin
234,83044,1296,11245,1423,1,0,N,N,N,CP_Drtn,TT_Task,DT_FixedDUR2,RV_OK,TK_NotStart,BEW/ST/IC10/1000,Structural Excavation,2511,3134.5,0,40,0,240,54,36,27,0,26.5,,,,2015-08-17 09:00,2015-08-23 14:00,,2014-03-24 15:30,2014-03-31 09:30,2014-03-24 15:30,2014-03-31 09:30,2014-03-24 15:30,2014-03-30 15:30,,2015-08-17 09:00,2015-08-23 14:00,,PT_Normal,,,,,UNXmEbBXfEa8OSw3i8ad2g,,,,N,0,0,,,2013-10-16 15:36,2013-11-12 10:36,NotPrmUser,admin
235,83045,1296,11271,1423,1,0,N,N,N,CP_Phys,TT_Task,DT_FixedDUR2,RV_OK,TK_NotStart,BEW/ST/IC10/1050,PCC & Pile Head Breaking,2553,3237.5,0,54,0,64,72,54,0,0,0,,,,2015-09-22 13:00,2015-09-30 12:00,,2014-04-14 14:30,2014-04-22 14:30,2014-04-14 14:30,2014-04-22 14:30,2014-04-14 14:30,2014-04-22 14:30,,2015-09-22 13:00,2015-09-30 12:00,,PT_Normal,,,,,IwzdiOHu7UykVqHas4BzMw,9nY9zvVTXEisJQz9uh9kgw,,,N,0,0,,,2013-10-16 19:23,2013-11-12 10:47,admin,admin
236,83046,1296,11271,1423,1,0,N,N,N,CP_Phys,TT_Task,DT_FixedDUR2,RV_OK,TK_NotStart,BEW/ST/IC10/1080,Concreting for Pile Cap / Abutment Foundation,2511,3331.5,0,81,0,252,144,81,18,0,162,,,,2015-10-18 07:00,2015-10-28 17:00,,2014-04-22 14:30,2014-05-05 14:30,2014-04-22 14:30,2014-05-05 14:30,2014-04-22 14:30,2014-05-05 14:30,,2015-10-18 07:00,2015-10-28 17:00,,PT_Normal,,,,,79eQB0WA7kGiomzSyyhXEQ,nW3GArWhT0Wd+R+3phDcag,,,N,0,0,,,2013-10-16 19:23,2013-11-11 17:00,admin,admin
237,83047,1296,11271,1423,1,0,N,N,N,CP_Phys,TT_Task,DT_FixedDUR2,RV_OK,TK_NotStart,BEW/ST/IC10/1140,Conceting including Formwork & Reinforcement fixing for Abutment,2511,3331.5,94,126,0,392,144,126,18,0,252,,,,2015-10-29 07:00,2015-11-17 17:00,,2014-05-05 14:30,2014-05-26 14:30,2014-05-05 14:30,2014-05-26 14:30,2014-05-05 14:30,2014-05-26 14:30,,2015-10-29 07:00,2015-11-17 17:00,,PT_Normal,,,,,ER2a17b2BEeQtZm344QGQA,imBC4drP2kOsn02Ivyncyw,,,N,0,0,,,2013-10-16 19:23,2013-11-11 17:00,admin,admin
238,83048,1296,11271,1423,1,0,N,N,N,CP_Drtn,TT_Task,DT_FixedDUR2,RV_OK,TK_NotStart,BEW/ST/IC10/1030,Structural Excavation,2511,3237.5,0,40,0,240,54,36,27,0,26.5,,,,2015-09-16 08:00,2015-09-22 12:00,,2014-04-08 09:30,2014-04-14 14:30,2014-04-08 09:30,2014-04-14 14:30,2014-04-08 09:30,2014-04-14 09:30,,2015-09-16 08:00,2015-09-22 12:00,,PT_Normal,,,,,O6hqQiIPGkeByOFKPKyWAQ,pUJNl5y7qEuJMum17H3LiA,,,N,0,0,,,2013-10-16 19:23,2013-11-12 10:36,admin,admin
239,83049,1296,11272,1423,1,0,N,N,N,CP_Phys,TT_Task,DT_FixedDUR2,RV_OK,TK_NotStart,BEW/ST/IC10/1120,PCC & Pile Head Breaking,2553,3237.5,0,54,0,64,72,54,0,0,0,,,,2015-10-07 07:00,2015-10-15 17:00,,2014-04-29 08:30,2014-05-07 08:30,2014-04-29 08:30,2014-05-07 08:30,2014-04-29 08:30,2014-05-07 08:30,,2015-10-07 07:00,2015-10-15 17:00,,PT_Normal,,,,,yMN4RbNyz0+INqjauhFk4g,yV3wKoD4JEevv72XvrrZwg,,,N,0,0,,,2013-10-16 23:11,2013-11-12 10:47,admin,admin
240,83050,1296,11272,1423,1,0,N,N,N,CP_Phys,TT_Task,DT_FixedDUR2,RV_OK,TK_NotStart,BEW/ST/IC10/1160,Concreting for Pile Cap / Pier Foundation,2511,3237.5,0,81,0,252,144,81,18,0,162,,,,2015-10-18 07:00,2015-10-28 17:00,,2014-05-07 08:30,2014-05-20 08:30,2014-05-07 08:30,2014-05-20 08:30,2014-05-07 08:30,2014-05-20 08:30,,2015-10-18 07:00,2015-10-28 17:00,,PT_Normal,,,,,ZfC0z2tvlkyLNkuvGTdYSg,HBE9dJZ380u7C9IsGkIWjQ,,,N,0,0,,,2013-10-16 23:11,2013-11-11 17:00,admin,admin
241,83051,1296,11272,1423,1,0,N,N,N,CP_Phys,TT_Task,DT_FixedDUR2,RV_OK,TK_NotStart,BEW/ST/IC10/1230,Conceting including Formwork & Reinforcement fixing for Pier,2511,3237.5,0,126,0,392,144,126,18,0,252,,,,2015-10-29 07:00,2015-11-17 17:00,,2014-05-20 08:30,2014-06-10 08:30,2014-05-20 08:30,2014-06-10 08:30,2014-05-20 08:30,2014-06-10 08:30,,2015-10-29 07:00,2015-11-17 17:00,,PT_Normal,,,,,ZL5j2nMicEuFLxc1QZzpRw,Wgc6T5qyT0q/xD0aL/eijA,,,N,0,0,,,2013-10-16 23:11,2013-11-11 17:00,admin,admin
242,83052,1296,11272,1423,1,0,N,N,N,CP_Drtn,TT_Task,DT_FixedDUR2,RV_OK,TK_NotStart,BEW/ST/IC10/1090,Structural Excavation,2511,3237.5,0,40,0,240,54,36,27,0,26.5,,,,2015-09-30 13:00,2015-10-06 17:00,,2014-04-22 14:30,2014-04-29 08:30,2014-04-22 14:30,2014-04-29 08:30,2014-04-22 14:30,2014-04-28 14:30,,2015-09-30 13:00,2015-10-06 17:00,,PT_Normal,,,,,nXKZqHCWT0iPPEEuwNcQ7Q,6ezql8FyIkSEB73nl7MJJA,,,N,0,0,,,2013-10-16 23:11,2013-11-11 17:00,admin,admin
243,83053,1296,11266,1423,1,0,N,N,N,CP_Phys,TT_Task,DT_FixedDUR2,RV_OK,TK_NotStart,BEW/ST/IC10/1060,PCC & Pile Head Breaking,2553,3134.5,0,54,0,64,72,54,0,0,0,,,,2015-09-07 08:00,2015-09-15 08:00,,2014-04-14 14:30,2014-04-22 14:30,2014-04-14 14:30,2014-04-22 14:30,2014-04-14 14:30,2014-04-22 14:30,,2015-09-07 08:00,2015-09-15 08:00,,PT_Normal,,,,,M2MsyRBnLEGUqIq8ZzJX0w,9nY9zvVTXEisJQz9uh9kgw,,,N,0,0,,,2013-10-24 00:00,2013-11-12 10:47,admin,admin
244,83054,1296,11266,1423,1,0,N,N,N,CP_Phys,TT_Task,DT_FixedDUR2,RV_OK,TK_NotStart,BEW/ST/IC10/1100,Concreting for Pile Cap / Abutment Foundation,2511,3322.5,0,81,0,252,144,81,18,0,162,,,,2015-10-15 07:00,2015-10-27 17:00,,2014-04-22 14:30,2014-05-05 14:30,2014-04-22 14:30,2014-05-05 14:30,2014-04-22 14:30,2014-05-05 14:30,,2015-10-15 07:00,2015-10-27 17:00,,PT_Normal,,,,,xxYbiujbnUST8b3mdNEOgw,nW3GArWhT0Wd+R+3phDcag,,,N,0,0,,,2013-10-24 00:00,2013-11-11 22:09,admin,admin
245,83055,1296,11266,1423,1,0,N,N,N,CP_Phys,TT_Task,DT_FixedDUR2,RV_OK,TK_NotStart,BEW/ST/IC10/1150,Conceting including Formwork & Reinforcement fixing for Abutment,2511,3322.5,188,126,0,392,144,126,18,0,252,,,,2015-10-28 07:00,2015-11-16 17:00,,2014-05-05 14:30,2014-05-26 14:30,2014-05-05 14:30,2014-05-26 14:30,2014-05-05 14:30,2014-05-26 14:30,,2015-10-28 07:00,2015-11-16 17:00,,PT_Normal,,,,,HUIe5Q4CWEOzdMUkkYPoHg,imBC4drP2kOsn02Ivyncyw,,,N,0,0,,,2013-10-24 00:00,2013-11-11 22:09,admin,admin
246,83056,1296,11461,1423,1,0,N,N,N,CP_Phys,TT_Task,DT_FixedDUR2,RV_OK,TK_NotStart,BEW/ST/IC10/1390,Staging For girder,2511,3134.5,0,126,0,392,270,126,72000,0,126,,,,2015-11-17 07:00,2015-12-07 17:00,,2014-06-24 13:30,2014-07-14 13:30,2014-06-24 13:30,2014-07-14 13:30,2014-06-24 13:30,2014-07-14 13:30,,2015-11-17 07:00,2015-12-07 17:00,,PT_Normal,,,,,CzVCjm/HnE20Zz/lKmWK+Q,Es6k0nfQKkefGFcX2eOn3g,,,N,0,0,,,2013-10-24 00:00,2013-11-11 22:09,admin,admin
247,83057,1296,11461,1423,1,0,N,N,N,CP_Phys,TT_Task,DT_FixedDUR2,RV_OK,TK_NotStart,BEW/ST/IC10/1430,Fixing of the Bearing,2511,3224.5,90,36,0,4,108,36,0,0,0,,,,2015-12-22 07:00,2015-12-28 17:00,,2014-07-14 13:30,2014-07-20 13:30,2014-07-14 13:30,2014-07-20 13:30,2014-07-14 13:30,2014-07-20 13:30,,2015-12-22 07:00,2015-12-28 17:00,,PT_Normal,,,,,75Rxizh3EUesbFKRX/0qfg,hJV+w1a+YEGDrG1HBkl+Kg,,,N,0,0,,,2013-10-24 00:00,2013-11-11 22:09,admin,admin
248,83058,1296,11461,1423,1,0,N,N,N,CP_Phys,TT_Task,DT_FixedDUR2,RV_OK,TK_NotStart,BEW/ST/IC10/1440,Bottom Formwork along with Sides of Box Girder,2511,3134.5,0,126,0,14,72,126,23,0,140,,,,2015-12-08 07:00,2015-12-28 17:00,,2014-07-14 13:30,2014-08-10 13:30,2014-07-14 13:30,2014-08-10 13:30,2014-07-14 13:30,2014-08-10 13:30,,2015-12-08 07:00,2015-12-28 17:00,,PT_Normal,,,,,yvRX0NuejUSh4lqEo1NESw,ZBBdCSj+ykq/ojjkLxJBQQ,,,N,0,0,,,2013-10-24 00:00,2013-11-11 22:56,admin,admin
249,83059,1296,11461,1423,1,0,N,N,N,CP_Phys,TT_Task,DT_FixedDUR2,RV_OK,TK_NotStart,BEW/ST/IC10/1500,Reinforcement Fixing for Base & Sides of Box Girder,2511,3134.5,0,126,0,392,270,126,9,0,14,,,,2015-12-29 07:00,2016-01-17 17:00,,2014-08-10 13:30,2014-08-28 13:30,2014-08-10 13:30,2014-08-28 13:30,2014-08-10 13:30,2014-08-28 13:30,,2015-12-29 07:00,2016-01-17 17:00,,PT_Normal,,,,,P0YElyqSN0yBJOrTBQLxMw,mBoQ//bRc0G4JdGXgZ3xyw,,,N,0,0,,,2013-10-24 00:00,2013-11-12 10:30,admin,admin
250,83060,1296,11461,1423,1,0,N,N,N,CP_Phys,TT_Task,DT_FixedDUR2,RV_OK,TK_NotStart,BEW/ST/IC10/1540,Formwork for Inner Sides & Wall,2511,3134.5,0,126,0,392,270,126,23,0,140,,,,2016-01-18 07:00,2016-02-04 17:00,,2014-08-28 13:30,2014-09-17 13:30,2014-08-28 13:30,2014-09-17 13:30,2014-08-28 13:30,2014-09-17 13:30,,2016-01-18 07:00,2016-02-04 17:00,,PT_Normal,,,,,H9CFkrSnTUmco3l52BhhRQ,lB9unlZiIE2Ma3+8/F3QYw,,,N,0,0,,,2013-10-24 00:00,2013-11-11 22:09,admin,admin
251,83061,1296,11461,1423,1,0,N,N,N,CP_Phys,TT_Task,DT_FixedDUR2,RV_OK,TK_NotStart,BEW/ST/IC10/1580,Reinforcement fixing at Sides,2511,3134.5,0,135,0,392,270,135,18,0,140,,,,2016-02-07 07:00,2016-02-25 17:00,,2014-09-17 13:30,2014-10-12 14:30,2014-09-17 13:30,2014-10-12 14:30,2014-09-17 13:30,2014-10-12 14:30,,2016-02-07 07:00,2016-02-25 17:00,,PT_Normal,,,,,LgVop1ItMEyBQJtMgES9iQ,dkaRX+3rSk6OEMZZIV8zhg,,,N,0,0,,,2013-10-24 00:00,2013-11-12 10:30,admin,admin
252,83062,1296,11461,1423,1,0,N,N,N,CP_Phys,TT_Task,DT_FixedDUR2,RV_OK,TK_NotStart,BEW/ST/IC10/1650,Concreting at sides,2511,3134.5,0,9,0,28,270,9,9,0,9,,,,2016-02-28 07:00,2016-02-28 17:00,,2014-10-12 14:30,2014-10-13 14:30,2014-10-12 14:30,2014-10-13 14:30,2014-10-12 14:30,2014-10-13 14:30,,2016-02-28 07:00,2016-02-28 17:00,,PT_Normal,,,,,ZPHYbV6Y+kqVuMpBwT92Dw,LxE1jwgW00ihWhbiddH/tw,,,N,0,0,,,2013-10-24 00:00,2013-11-11 22:09,admin,admin
253,83063,1296,11426,1423,1,0,N,N,N,CP_Phys,TT_Task,DT_FixedDUR2,RV_OK,TK_NotStart,BEW/ST/IC10/1670,Shuttering of Top Slab,2511,3134.5,0,135,0,420,270,135,18,0,150,,,,2016-03-03 07:00,2016-03-23 17:00,,2014-10-16 14:30,2014-11-06 14:30,2014-10-16 14:30,2014-11-06 14:30,2014-10-16 14:30,2014-11-06 14:30,,2016-03-03 07:00,2016-03-23 17:00,,PT_Normal,,,,,1szJpqSCpk2ZxTUwoY7PBw,Gc9lOpL7l0CgaL8p8WAgvA,,,N,0,0,,,2013-10-24 00:00,2013-11-12 10:30,admin,admin
254,83064,1296,11426,1423,1,0,N,N,N,CP_Phys,TT_Task,DT_FixedDUR2,RV_OK,TK_NotStart,BEW/ST/IC10/1690,Reinforcement fixing for Top Slab,2511,3134.5,0,126,0,392,270,126,18,0,140,,,,2016-03-13 07:00,2016-03-30 17:00,,2014-10-26 14:30,2014-11-13 14:30,2014-10-26 14:30,2014-11-13 14:30,2014-10-26 14:30,2014-11-13 14:30,,2016-03-13 07:00,2016-03-30 17:00,,PT_Normal,,,,,rOH2bnFyjEOSqfpbfq7ITA,YxjWdXp4vUGct8kDCqC6GQ,,,N,0,0,,,2013-10-24 00:00,2013-11-12 10:30,admin,admin
255,83065,1296,11426,1423,1,0,N,N,N,CP_Phys,TT_Task,DT_FixedDUR2,RV_OK,TK_NotStart,BEW/ST/IC10/1720,Concreting of Top Slab,2511,3134.5,0,9,0,28,270,9,18,0,10,,,,2016-03-31 07:00,2016-03-31 17:00,,2014-11-13 14:30,2014-11-16 14:30,2014-11-13 14:30,2014-11-16 14:30,2014-11-13 14:30,2014-11-16 14:30,,2016-03-31 07:00,2016-03-31 17:00,,PT_Normal,,,,,N3FIUEJv60GPbjHGRipufA,9ZoY+WdP2UaF/Ju5Pxx1MQ,,,N,0,0,,,2013-10-24 00:00,2013-11-12 10:28,admin,admin
256,83066,1296,11426,1423,1,0,N,N,N,CP_Phys,TT_Task,DT_FixedDUR2,RV_OK,TK_NotStart,BEW/ST/IC10/1760,Removal of Staging,2511,3134.5,0,54,0,168,270,54,9,0,6,,,,2016-04-17 07:00,2016-04-24 17:00,,2014-12-01 14:30,2014-12-09 14:30,2014-12-01 14:30,2014-12-09 14:30,2014-12-01 14:30,2014-12-09 14:30,,2016-04-17 07:00,2016-04-24 17:00,,PT_Normal,,,,,zvDFaB569kSb8xym+oF0nQ,G6Yo6BeUnEK1cCx1zjaYGg,,,N,0,0,,,2013-10-24 00:00,2013-11-12 10:30,admin,admin
257,83067,1296,11426,1423,1,0,N,N,N,CP_Phys,TT_Task,DT_FixedDUR2,RV_OK,TK_NotStart,BEW/ST/IC10/1770,Miscellaneous Works,2511,3134.5,0,90,0,280,270,90,0,0,0,,,,2016-04-25 07:00,2016-05-09 17:00,,2014-12-09 14:30,2014-12-23 14:30,2014-12-09 14:30,2014-12-23 14:30,2014-12-09 14:30,2014-12-23 14:30,,2016-04-25 07:00,2016-05-09 17:00,,PT_Normal,,,,,JdTP3SsbNkGyLY3oKnFLYQ,h32jRsppwEaqcBIC/ugIhA,,,N,0,0,,,2013-10-24 00:00,2013-11-11 22:09,admin,admin
258,83068,1296,11430,1423,1,0,N,N,N,CP_Phys,TT_Task,DT_FixedDUR2,RV_OK,TK_NotStart,BEW/ST/IC10/1740,Stressing of the Structure including Grouting,2553,3134.5,0,45,0,180,270,45,9,0,45,,,,2016-04-10 07:00,2016-04-14 17:00,,2014-11-24 14:30,2014-12-01 14:30,2014-11-24 14:30,2014-12-01 14:30,2014-11-24 14:30,2014-12-01 14:30,,2016-04-10 07:00,2016-04-14 17:00,,PT_Normal,,,,,X9sNUKhxxUauRTstBvQs4A,qbbvr/iHVEipItaW9rBzpg,,,N,0,0,,,2013-10-24 00:00,2013-11-11 22:09,admin,admin
259,83069,1296,11266,1423,1,0,N,N,N,CP_Drtn,TT_Task,DT_FixedDUR2,RV_OK,TK_NotStart,BEW/ST/IC10/1040,Structural Excavation,2511,3134.5,0,40,0,240,54,36,27,0,26.5,,,,2015-08-31 14:00,2015-09-07 08:00,,2014-04-08 09:30,2014-04-14 14:30,2014-04-08 09:30,2014-04-14 14:30,2014-04-08 09:30,2014-04-14 09:30,,2015-08-31 14:00,2015-09-07 08:00,,PT_Normal,,,,,ULFDgDEa2U+RwriidK0nYw,pUJNl5y7qEuJMum17H3LiA,,,N,0,0,,,2013-10-24 00:00,2013-11-11 22:09,admin,admin
260,83070,1296,11283,1423,1,0,N,N,N,CP_Phys,TT_Task,DT_FixedDUR2,RV_OK,TK_NotStart,BEW/ST/IC10/1130,PCC & Pile Head Breaking,2553,3134.5,0,54,0,64,72,54,0,0,0,,,,2015-09-21 13:00,2015-09-29 12:00,,2014-04-29 08:30,2014-05-07 08:30,2014-04-29 08:30,2014-05-07 08:30,2014-04-29 08:30,2014-05-07 08:30,,2015-09-21 13:00,2015-09-29 12:00,,PT_Normal,,,,,fieLmMKsZUSFhIw3TEMmRQ,yV3wKoD4JEevv72XvrrZwg,,,N,0,0,,,2013-10-24 00:00,2013-11-12 10:47,admin,admin
261,83071,1296,11283,1423,1,0,N,N,N,CP_Phys,TT_Task,DT_FixedDUR2,RV_OK,TK_NotStart,BEW/ST/IC10/1170,Concreting for Pile Cap / Abutment Foundation,2511,3228.5,0,81,0,252,144,81,18,0,162,,,,2015-10-15 07:00,2015-10-27 17:00,,2014-05-07 08:30,2014-05-20 08:30,2014-05-07 08:30,2014-05-20 08:30,2014-05-07 08:30,2014-05-20 08:30,,2015-10-15 07:00,2015-10-27 17:00,,PT_Normal,,,,,lki6kb7zVU68WQyBj7tgPg,HBE9dJZ380u7C9IsGkIWjQ,,,N,0,0,,,2013-10-24 00:00,2013-11-11 22:09,admin,admin
262,83072,1296,11283,1423,1,0,N,N,N,CP_Phys,TT_Task,DT_FixedDUR2,RV_OK,TK_NotStart,BEW/ST/IC10/1240,Conceting including Formwork & Reinforcement fixing for Abutment,2511,3228.5,94,126,0,392,144,126,18,0,252,,,,2015-10-28 07:00,2015-11-16 17:00,,2014-05-20 08:30,2014-06-10 08:30,2014-05-20 08:30,2014-06-10 08:30,2014-05-20 08:30,2014-06-10 08:30,,2015-10-28 07:00,2015-11-16 17:00,,PT_Normal,,,,,P48EcuHsw0CDdnWL7f0G4Q,Wgc6T5qyT0q/xD0aL/eijA,,,N,0,0,,,2013-10-24 00:00,2013-11-11 22:09,admin,admin
263,83073,1296,11283,1423,1,0,N,N,N,CP_Drtn,TT_Task,DT_FixedDUR2,RV_OK,TK_NotStart,BEW/ST/IC10/1110,Structural Excavation,2511,3134.5,0,40,0,240,54,36,27,0,26.5,,,,2015-09-15 08:00,2015-09-21 12:00,,2014-04-22 14:30,2014-04-29 08:30,2014-04-22 14:30,2014-04-29 08:30,2014-04-22 14:30,2014-04-28 14:30,,2015-09-15 08:00,2015-09-21 12:00,,PT_Normal,,,,,PPxE+CkDZUaevBMfjAkPbA,6ezql8FyIkSEB73nl7MJJA,,,N,0,0,,,2013-10-24 00:00,2013-11-11 22:09,admin,admin
264,83074,1296,11241,1423,1,0,N,N,N,CP_Phys,TT_Task,DT_FixedDUR2,RV_OK,TK_NotStart,BEW/ST/IC10/1200,PCC & Pile Head Breaking,2553,3134.5,0,54,0,64,72,54,0,0,0,,,,2015-10-06 07:00,2015-10-13 17:00,,2014-05-13 13:30,2014-05-21 13:30,2014-05-13 13:30,2014-05-21 13:30,2014-05-13 13:30,2014-05-21 13:30,,2015-10-06 07:00,2015-10-13 17:00,,PT_Normal,,,,,lJJVTZXjAUOTItV/4ibRBA,QdzI87r9okSyfL2W+fXCcw,,,N,0,0,,,2013-10-24 00:00,2013-11-12 10:47,admin,admin
265,83075,1296,11241,1423,1,0,N,N,N,CP_Phys,TT_Task,DT_FixedDUR2,RV_OK,TK_NotStart,BEW/ST/IC10/1250,Concreting for Pile Cap / Pier Foundation,2511,3134.5,0,81,0,252,144,81,18,0,162,,,,2015-10-15 07:00,2015-10-27 17:00,,2014-05-21 13:30,2014-06-04 13:30,2014-05-21 13:30,2014-06-04 13:30,2014-05-21 13:30,2014-06-04 13:30,,2015-10-15 07:00,2015-10-27 17:00,,PT_Normal,,,,,tYSheJw3tEKhmjbuXXZRdQ,om6ORCgaa06oxyWGZzC4Lg,,,N,0,0,,,2013-10-24 00:00,2013-11-11 22:09,admin,admin
266,83076,1296,11241,1423,1,0,N,N,N,CP_Phys,TT_Task,DT_FixedDUR2,RV_OK,TK_NotStart,BEW/ST/IC10/1300,Conceting including Formwork & Reinforcement fixing for Pier,2511,3134.5,0,126,0,392,144,126,18,0,252,,,,2015-10-28 07:00,2015-11-16 17:00,,2014-06-04 13:30,2014-06-24 13:30,2014-06-04 13:30,2014-06-24 13:30,2014-06-04 13:30,2014-06-24 13:30,,2015-10-28 07:00,2015-11-16 17:00,,PT_Normal,,,,,pvww3aBi8UKcrLI+/DXvIA,GMU9zTL6c0uutuCNveaNmw,,,N,0,0,,,2013-10-24 00:00,2013-11-11 22:09,admin,admin
267,83077,1296,11241,1423,1,0,N,N,N,CP_Drtn,TT_Task,DT_FixedDUR2,RV_OK,TK_NotStart,BEW/ST/IC10/1180,Structural Excavation,2511,3134.5,0,40,0,240,54,36,27,0,26.5,,,,2015-09-29 13:00,2015-10-05 17:00,,2014-05-07 08:30,2014-05-13 13:30,2014-05-07 08:30,2014-05-13 13:30,2014-05-07 08:30,2014-05-13 08:30,,2015-09-29 13:00,2015-10-05 17:00,,PT_Normal,,,,,iAKdbubKe0yFVTXJ42ybng,pvL9fmjU40mdPsHIRYOwxA,,,N,0,0,,,2013-10-24 00:00,2013-11-11 22:09,admin,admin
268,83078,1296,11053,1423,1,0,N,N,N,CP_Drtn,TT_Task,DT_FixedDUR2,RV_OK,TK_NotStart,BEW/ST/IC10/1220,Excavation for MSE Wall - LHS,2553,3598.5,0,40,0,80,49,40,9,0,40,,,,2015-12-27 13:00,2015-12-31 17:00,,2014-05-19 13:30,2014-05-27 07:30,2014-05-19 13:30,2014-05-27 07:30,2014-05-19 13:30,2014-05-27 07:30,,2015-12-27 13:00,2015-12-31 17:00,,PT_Normal,,,,,EyN3ajyerkapxXryS4HhxQ,,,,N,0,0,,,2013-10-25 23:46,2013-11-11 16:49,admin,admin
269,83079,1296,11053,1423,1,0,N,N,N,CP_Drtn,TT_Task,DT_FixedDUR2,RV_OK,TK_NotStart,BEW/ST/IC10/1260,Foundation For MSE Wall including Blinding LHS,2553,3598.5,0,108,0,432,180,108,18,0,216,,,,2016-01-03 07:00,2016-01-18 17:00,,2014-05-27 07:30,2014-06-12 07:30,2014-05-27 07:30,2014-06-12 07:30,2014-05-27 07:30,2014-06-12 07:30,,2016-01-03 07:00,2016-01-18 17:00,,PT_Normal,,,,,Mp5IhvZTXkKlbrHbYe+EPQ,,,,N,0,0,,,2013-10-25 23:47,2013-11-11 16:49,admin,admin
270,83080,1296,11053,1423,1,0,N,N,N,CP_Drtn,TT_Task,DT_FixedDUR2,RV_OK,TK_NotStart,BEW/ST/IC10/1350,Fixing of MSE Walls Pannels LHS,2553,3598.5,0,216,0,648,126,216,18,0,216,,,,2016-01-19 07:00,2016-02-21 17:00,,2014-06-12 07:30,2014-07-16 07:30,2014-06-12 07:30,2014-07-16 07:30,2014-06-12 07:30,2014-07-16 07:30,,2016-01-19 07:00,2016-02-21 17:00,,PT_Normal,,,,,D0bTtYb2uESD0Ib+F16zYw,,,,N,0,0,,,2013-10-25 23:47,2013-11-11 16:49,admin,admin
271,83081,1296,11053,1423,1,0,N,N,N,CP_Drtn,TT_Task,DT_FixedDUR2,RV_OK,TK_NotStart,BEW/ST/IC10/1450,Earth filling & Embankment Preparation LHS,2553,3598.5,0,189,0,378,90,189,72,0,756,,,,2016-02-22 07:00,2016-03-21 17:00,,2014-07-16 07:30,2014-08-21 07:30,2014-07-16 07:30,2014-08-21 07:30,2014-07-16 07:30,2014-08-21 07:30,,2016-02-22 07:00,2016-03-21 17:00,,PT_Normal,,,,,i+R8JDjVikuzmFzBP3wCOQ,,,,N,0,0,,,2013-10-25 23:52,2013-11-12 09:52,admin,admin
272,83082,1296,11053,1423,1,0,N,N,N,CP_Drtn,TT_Task,DT_FixedDUR2,RV_OK,TK_NotStart,BEW/ST/IC10/1530,Granular Sub-Base LHS,2553,3598.5,0,135,0,270,72,135,63,0,540,,,,2016-03-22 07:00,2016-04-11 17:00,,2014-08-21 07:30,2014-09-11 07:30,2014-08-21 07:30,2014-09-11 07:30,2014-08-21 07:30,2014-09-11 07:30,,2016-03-22 07:00,2016-04-11 17:00,,PT_Normal,,,,,2ktCrxmOFkOo5/sZWZIEWQ,,,,N,0,0,,,2013-10-25 23:53,2013-11-11 23:01,admin,admin
273,83083,1296,11053,1423,1,0,N,N,N,CP_Drtn,TT_Task,DT_FixedDUR2,RV_OK,TK_NotStart,BEW/ST/IC10/1480,Concreting of Approch Slab RHS,2553,3854.5,256,81,0,324,90,81,9,0,81,,,,2016-04-12 07:00,2016-04-24 17:00,,2014-08-03 13:30,2014-08-14 13:30,2014-08-03 13:30,2014-08-14 13:30,2014-08-03 13:30,2014-08-14 13:30,,2016-04-12 07:00,2016-04-24 17:00,,PT_Normal,,,,,Jmh5xl5XWkKC5UfvNvwUIQ,,,,N,0,0,,,2013-10-27 11:40,2013-11-11 16:49,admin,admin
274,83084,1296,11053,1423,1,0,N,N,N,CP_Drtn,TT_Task,DT_FixedDUR2,RV_OK,TK_NotStart,BEW/ST/IC10/1570,Concreting of Approch Slab LHS,2553,3598.5,0,81,0,324,90,81,9,0,81,,,,2016-04-12 07:00,2016-04-24 17:00,,2014-09-11 07:30,2014-09-24 07:30,2014-09-11 07:30,2014-09-24 07:30,2014-09-11 07:30,2014-09-24 07:30,,2016-04-12 07:00,2016-04-24 17:00,,PT_Normal,,,,,lv1znBk9jkGEajxHioatsQ,,,,N,0,0,,,2013-10-27 11:40,2013-11-11 16:49,admin,admin
275,83085,1296,11063,1423,1,0,N,N,N,CP_Phys,TT_Task,DT_FixedDUR2,RV_OK,TK_NotStart,BEW/ST/IC10/1270,Excavation for MSE Wall - RHS,2553,3612.5,0,36,0,54,45,36,9,0,36,,,,2016-01-04 13:00,2016-01-10 12:00,,2014-05-27 07:30,2014-06-02 07:30,2014-05-27 07:30,2014-06-02 07:30,2014-05-27 07:30,2014-06-02 07:30,,2016-01-04 13:00,2016-01-10 12:00,,PT_Normal,,,,,HnqZDNmoxkiC8ytzxcKHhw,IKHhh4sxekGDcSVLDvFarA,,,N,0,0,,,2013-10-27 14:05,2013-11-09 22:40,admin,admin
276,83086,1296,11063,1423,1,0,N,N,N,CP_Phys,TT_Task,DT_FixedDUR2,RV_OK,TK_NotStart,BEW/ST/IC10/1280,Foundation For MSE Wall including Blinding RHS,2553,3868.5,0,108,0,432,180,108,18,0,216,,,,2016-02-18 07:00,2016-03-06 17:00,,2014-06-02 07:30,2014-06-18 07:30,2014-06-02 07:30,2014-06-18 07:30,2014-06-02 07:30,2014-06-18 07:30,,2016-02-18 07:00,2016-03-06 17:00,,PT_Normal,,,,,bQNC93+4+UKw1D4n0rXklw,zv8fCvKULkSyJm9v6Bz2WQ,,,N,0,0,,,2013-10-27 14:05,2013-11-11 13:06,admin,admin
277,83087,1296,11063,1423,1,0,N,N,N,CP_Phys,TT_Task,DT_FixedDUR2,RV_OK,TK_NotStart,BEW/ST/IC10/1360,Fixing of MSE Walls Pannels RHS,2553,3868.5,0,216,0,648,126,216,18,0,24,,,,2016-03-07 07:00,2016-04-07 17:00,,2014-06-18 07:30,2014-07-22 07:30,2014-06-18 07:30,2014-07-22 07:30,2014-06-18 07:30,2014-07-22 07:30,,2016-03-07 07:00,2016-04-07 17:00,,PT_Normal,,,,,ETcTOIwtRECrb8Hs+Qx+2w,IyYqAvxthkGAc4M0wMYjIw,,,N,0,0,,,2013-10-27 14:05,2013-11-09 22:40,admin,admin
278,83088,1296,11063,1423,1,0,N,N,N,CP_Phys,TT_Task,DT_FixedDUR2,RV_OK,TK_NotStart,BEW/ST/IC10/1370,Earth filling & Embankment Preparation RHS,2553,3868.5,0,189,0,378,90,189,72,0,756,,,,2016-03-07 07:00,2016-04-04 17:00,,2014-06-18 07:30,2014-07-17 07:30,2014-06-18 07:30,2014-07-17 07:30,2014-06-18 07:30,2014-07-17 07:30,,2016-03-07 07:00,2016-04-04 17:00,,PT_Normal,,,,,z9RZ/Tp640qKHsL/RwNAVw,sFaACfqVgk+LROY10z6eGw,,,N,0,0,,,2013-10-27 14:05,2013-11-12 09:52,admin,admin
279,83089,1296,11063,1423,1,0,N,N,N,CP_Phys,TT_Task,DT_FixedDUR2,RV_OK,TK_NotStart,BEW/ST/IC10/1460,Granular Sub-Base RHS,2553,3868.5,0,135,0,270,72,135,63,0,180,,,,2016-04-05 07:00,2016-04-25 17:00,,2014-07-17 07:30,2014-08-14 07:30,2014-07-17 07:30,2014-08-14 07:30,2014-07-17 07:30,2014-08-14 07:30,,2016-04-05 07:00,2016-04-25 17:00,,PT_Normal,,,,,NjzrhYuwe0WCqf2iCjLbsQ,K9l/tlXGHUKN2+5jbiEoBA,,,N,0,0,,,2013-10-27 14:05,2013-11-11 23:01,admin,admin
280,83090,1296,11063,1423,1,0,N,N,N,CP_Phys,TT_Task,DT_FixedDUR2,RV_OK,TK_NotStart,BEW/ST/IC10/1630,Aggregate Base Course,2553,3612.5,0,90,0,180,90,90,74,0,110,,,,2016-05-10 07:00,2016-05-23 17:00,,2014-10-08 13:30,2014-10-22 13:30,2014-10-08 13:30,2014-10-22 13:30,2014-10-08 13:30,2014-10-22 13:30,,2016-05-10 07:00,2016-05-23 17:00,,PT_Normal,,,,,mxlZEyozrE+8gFrbnL27CA,0/R1ec893Uq9DTOkBdVurw,,,N,0,0,,,2013-10-27 14:05,2013-11-12 09:57,admin,admin
281,83091,1296,11063,1423,1,0,N,N,N,CP_Phys,TT_Task,DT_FixedDUR2,RV_OK,TK_NotStart,BEW/ST/IC10/1680,Crash Barrier & Median Works,2553,3612.5,478,180,0,720,162,180,18,0,360,,,,2016-05-24 07:00,2016-06-20 17:00,,2014-10-22 13:30,2014-11-20 13:30,2014-10-22 13:30,2014-11-20 13:30,2014-10-22 13:30,2014-11-20 13:30,,2016-05-24 07:00,2016-06-20 17:00,,PT_Normal,,,,,gm6yLt8HukmyN8fyaVdFsw,0glGk/G33UW6VHSNj6TRqA,,,N,0,0,,,2013-10-27 14:05,2013-11-11 22:09,admin,admin
282,83092,1296,11063,1423,1,0,N,N,N,CP_Phys,TT_Task,DT_FixedDUR2,RV_OK,TK_NotStart,BEW/ST/IC10/1790,Bituminous Base Course Including IC,2553,3224.5,0,90,0,180,90,90,76,0,60,,,,2016-05-24 07:00,2016-06-06 17:00,,2014-12-23 14:30,2015-01-07 14:30,2014-12-23 14:30,2015-01-07 14:30,2014-12-23 14:30,2015-01-07 14:30,,2016-05-24 07:00,2016-06-06 17:00,,PT_Normal,,,,,HT6S07vZE0q/ZGG1hHnK3A,oOxV5A1ruUG3f+7Te7cLdg,,,N,0,0,,,2013-10-27 14:05,2013-11-12 10:02,admin,admin
283,83093,1296,11063,1423,1,0,N,N,N,CP_Phys,TT_Task,DT_FixedDUR2,RV_OK,TK_NotStart,BEW/ST/IC10/1810,Bituminous Wearing Course,2553,3224.5,90,90,0,180,90,90,78,0,70,,,,2016-06-07 07:00,2016-06-20 17:00,,2015-01-07 14:30,2015-01-21 14:30,2015-01-07 14:30,2015-01-21 14:30,2015-01-07 14:30,2015-01-21 14:30,,2016-06-07 07:00,2016-06-20 17:00,,PT_Normal,,,,,phw4I4gbrkC7fS83rBg6lw,TZKTHc08jEGgRC3bIicTAw,,,N,0,0,,,2013-10-27 14:05,2013-11-11 22:51,admin,admin
284,83094,1296,11063,1423,1,0,N,N,N,CP_Phys,TT_Task,DT_FixedDUR2,RV_OK,TK_NotStart,BEW/ST/IC10/1830,Miscellaneous Works,2553,3134.5,0,90,0,180,108,90,0,0,0,,,,2016-06-21 07:00,2016-07-04 17:00,,2015-02-04 14:30,2015-02-18 14:30,2015-02-04 14:30,2015-02-18 14:30,2015-02-04 14:30,2015-02-18 14:30,,2016-06-21 07:00,2016-07-04 17:00,,PT_Normal,,,,,qxWaHEAxyEe5lqIikmvyNw,+zBRjHxB+0i4dUynAlfQNQ,,,N,0,0,,,2013-10-27 14:05,2013-11-11 22:09,admin,admin
285,83095,1296,11063,1423,1,0,N,N,N,CP_Drtn,TT_Task,DT_FixedDUR2,RV_OK,TK_NotStart,BEW/ST/IC10/1290,Excavation for MSE Wall - LHS,2553,3612.5,0,40,0,80,49,40,9,0,40,,,,2016-01-10 13:00,2016-01-14 17:00,,2014-06-02 07:30,2014-06-08 11:30,2014-06-02 07:30,2014-06-08 11:30,2014-06-02 07:30,2014-06-08 11:30,,2016-01-10 13:00,2016-01-14 17:00,,PT_Normal,,,,,Gj4AHkGyVEChOYrNUUxYqw,izs5Ah7qcUqutUWTDhOoyw,,,N,0,0,,,2013-10-27 14:05,2013-11-09 22:40,admin,admin
286,83096,1296,11063,1423,1,0,N,N,N,CP_Drtn,TT_Task,DT_FixedDUR2,RV_OK,TK_NotStart,BEW/ST/IC10/1330,Foundation For MSE Wall including Blinding LHS,2553,3612.5,0,108,0,432,180,108,18,0,216,,,,2016-01-17 07:00,2016-02-01 17:00,,2014-06-08 11:30,2014-06-24 11:30,2014-06-08 11:30,2014-06-24 11:30,2014-06-08 11:30,2014-06-24 11:30,,2016-01-17 07:00,2016-02-01 17:00,,PT_Normal,,,,,vCBUGQUN2kepdxdEt63ijg,XHDsMqTWgkqziVwA4tb6lA,,,N,0,0,,,2013-10-27 14:05,2013-11-11 13:06,admin,admin
287,83097,1296,11063,1423,1,0,N,N,N,CP_Drtn,TT_Task,DT_FixedDUR2,RV_OK,TK_NotStart,BEW/ST/IC10/1380,Fixing of MSE Walls Pannels LHS,2553,3612.5,0,216,0,648,126,216,18,0,216,,,,2016-02-02 07:00,2016-03-06 17:00,,2014-06-24 11:30,2014-08-04 11:30,2014-06-24 11:30,2014-08-04 11:30,2014-06-24 11:30,2014-08-04 11:30,,2016-02-02 07:00,2016-03-06 17:00,,PT_Normal,,,,,1+KxaM6AxUSNOPH8DJzmgQ,v+CZ9IGkPEi2SGuS+B/MRg,,,N,0,0,,,2013-10-27 14:05,2013-11-09 22:40,admin,admin
288,83098,1296,11063,1423,1,0,N,N,N,CP_Drtn,TT_Task,DT_FixedDUR2,RV_OK,TK_NotStart,BEW/ST/IC10/1490,Earth filling & Embankment Preparation LHS,2553,3612.5,0,189,0,378,90,189,72,0,756,,,,2016-03-07 07:00,2016-04-04 17:00,,2014-08-04 11:30,2014-09-02 11:30,2014-08-04 11:30,2014-09-02 11:30,2014-08-04 11:30,2014-09-02 11:30,,2016-03-07 07:00,2016-04-04 17:00,,PT_Normal,,,,,3h3AD1T0dUWxJznLug3riw,7k8RfxNnlkm32oe1Tk+GSg,,,N,0,0,,,2013-10-27 14:05,2013-11-12 09:52,admin,admin
289,83099,1296,11063,1423,1,0,N,N,N,CP_Drtn,TT_Task,DT_FixedDUR2,RV_OK,TK_NotStart,BEW/ST/IC10/1550,Granular Sub-Base LHS,2553,3612.5,0,135,0,270,72,135,63,0,540,,,,2016-04-05 07:00,2016-04-25 17:00,,2014-09-02 11:30,2014-09-23 11:30,2014-09-02 11:30,2014-09-23 11:30,2014-09-02 11:30,2014-09-23 11:30,,2016-04-05 07:00,2016-04-25 17:00,,PT_Normal,,,,,ST1aJ4UxUkShZcfm/Fu4tA,ieuDu26wbkm41eeEGZOpzw,,,N,0,0,,,2013-10-27 14:05,2013-11-11 23:01,admin,admin
290,83100,1296,11063,1423,1,0,N,N,N,CP_Drtn,TT_Task,DT_FixedDUR2,RV_OK,TK_NotStart,BEW/ST/IC10/1510,Concreting of Approch Slab RHS,2553,3868.5,256,81,0,324,90,81,9,0,81,,,,2016-04-26 07:00,2016-05-09 17:00,,2014-08-14 07:30,2014-08-27 07:30,2014-08-14 07:30,2014-08-27 07:30,2014-08-14 07:30,2014-08-27 07:30,,2016-04-26 07:00,2016-05-09 17:00,,PT_Normal,,,,,1EpkJwDNC0qh+1/dKlaWSA,j789zBA+VkqyBy7cQMwqxQ,,,N,0,0,,,2013-10-27 14:05,2013-11-09 22:40,admin,admin
291,83101,1296,11063,1423,1,0,N,N,N,CP_Drtn,TT_Task,DT_FixedDUR2,RV_OK,TK_NotStart,BEW/ST/IC10/1600,Concreting of Approch Slab LHS,2553,3612.5,0,81,0,324,90,81,9,0,81,,,,2016-04-26 07:00,2016-05-09 17:00,,2014-09-23 11:30,2014-10-08 13:30,2014-09-23 11:30,2014-10-08 13:30,2014-09-23 11:30,2014-10-08 13:30,,2016-04-26 07:00,2016-05-09 17:00,,PT_Normal,,,,,DAjKD7Y3OkeGkpPWg7KGbA,iB/UOho5OECu30AtXKUfwQ,,,N,0,0,,,2013-10-27 14:05,2013-11-09 22:40,admin,admin
292,83438,1296,11256,1423,1,0,N,N,N,CP_Phys,TT_Task,DT_FixedDUR2,RV_OK,TK_NotStart,BEW/ST/OP14/4010,PCC & Pile Head Breaking,2553,3210.5,0,54,0,64,72,54,0,0,0,,,,2015-09-08 08:00,2015-09-16 08:00,,2014-04-03 09:30,2014-04-13 09:30,2014-04-03 09:30,2014-04-13 09:30,2014-04-03 09:30,2014-04-13 09:30,,2015-09-08 08:00,2015-09-16 08:00,,PT_Normal,,,,,RXvif6RT2E+4YdjYMueK2g,rKcjTFizVUKf49/coB3qQA,,,N,0,0,,,2013-10-27 21:41,2013-11-12 10:47,admin,admin
293,83439,1296,11256,1423,1,0,N,N,N,CP_Phys,TT_Task,DT_FixedDUR2,RV_OK,TK_NotStart,BEW/ST/OP14/4020,Concreting for Pile Cap / Abutment Foundation,2511,3398.5,0,81,0,252,144,81,18,0,162,,,,2015-10-18 07:00,2015-10-28 17:00,,2014-04-13 09:30,2014-04-24 09:30,2014-04-13 09:30,2014-04-24 09:30,2014-04-13 09:30,2014-04-24 09:30,,2015-10-18 07:00,2015-10-28 17:00,,PT_Normal,,,,,dNDnnXA5KkuaFWh/zA0EfQ,TDDHhRFYMUexkN02qRmRJg,,,N,0,0,,,2013-10-27 21:41,2013-11-11 17:01,admin,admin
294,83440,1296,11256,1423,1,0,N,N,N,CP_Phys,TT_Task,DT_FixedDUR2,RV_OK,TK_NotStart,BEW/ST/OP14/4050,Conceting including Formwork & Reinforcement fixing for Abutment,2511,3398.5,188,126,0,392,144,126,18,0,252,,,,2015-10-29 07:00,2015-11-17 17:00,,2014-04-24 09:30,2014-05-14 09:30,2014-04-24 09:30,2014-05-14 09:30,2014-04-24 09:30,2014-05-14 09:30,,2015-10-29 07:00,2015-11-17 17:00,,PT_Normal,,,,,k4vQijxeC0+FT9pbwUpOog,TsYakkfJokiuXsowIWrASQ,,,N,0,0,,,2013-10-27 21:41,2013-11-11 17:01,admin,admin
295,83441,1296,11429,1423,1,0,N,N,N,CP_Phys,TT_Task,DT_FixedDUR2,RV_OK,TK_NotStart,BEW/ST/OP14/4260,Staging For girder,2511,3210.5,0,126,0,392,270,126,72000,0,126,,,,2015-11-19 07:00,2015-12-08 17:00,,2014-06-15 08:30,2014-07-03 08:30,2014-06-15 08:30,2014-07-03 08:30,2014-06-15 08:30,2014-07-03 08:30,,2015-11-19 07:00,2015-12-08 17:00,,PT_Normal,,,,,9M0rxSps90SVIoG4alwHwg,Lg8MIfF46k+7/ZI/mk8zQQ,,,N,0,0,,,2013-10-27 21:41,2013-11-11 17:01,admin,admin
296,83442,1296,11429,1423,1,0,N,N,N,CP_Phys,TT_Task,DT_FixedDUR2,RV_OK,TK_NotStart,BEW/ST/OP14/4280,Fixing of the Bearing,2511,3300.5,90,36,0,4,108,36,0,0,0,,,,2015-12-24 07:00,2015-12-29 17:00,,2014-07-03 08:30,2014-07-09 08:30,2014-07-03 08:30,2014-07-09 08:30,2014-07-03 08:30,2014-07-09 08:30,,2015-12-24 07:00,2015-12-29 17:00,,PT_Normal,,,,,7RCo2hfhIEKRC17NLAuDFg,MFW3gPH4W0O2+w2kQis6Ig,,,N,0,0,,,2013-10-27 21:41,2013-11-11 17:01,admin,admin
297,83443,1296,11429,1423,1,0,N,N,N,CP_Phys,TT_Task,DT_FixedDUR2,RV_OK,TK_NotStart,BEW/ST/OP14/4290,Bottom Formwork along with Sides of Box Girder,2511,3210.5,0,126,0,14,72,126,23,0,140,,,,2015-12-09 07:00,2015-12-29 17:00,,2014-07-03 08:30,2014-07-24 08:30,2014-07-03 08:30,2014-07-24 08:30,2014-07-03 08:30,2014-07-24 08:30,,2015-12-09 07:00,2015-12-29 17:00,,PT_Normal,,,,,YwRthv/zKEaYrP+5bFrm6w,rQrqGuIKdky9NcFcJUMbcQ,,,N,0,0,,,2013-10-27 21:41,2013-11-11 22:56,admin,admin
298,83444,1296,11429,1423,1,0,N,N,N,CP_Phys,TT_Task,DT_FixedDUR2,RV_OK,TK_NotStart,BEW/ST/OP14/4340,Reinforcement Fixing for Base & Sides of Box Girder,2511,3210.5,0,126,0,392,270,126,9,0,14,,,,2015-12-30 07:00,2016-01-18 17:00,,2014-07-24 08:30,2014-08-19 08:30,2014-07-24 08:30,2014-08-19 08:30,2014-07-24 08:30,2014-08-19 08:30,,2015-12-30 07:00,2016-01-18 17:00,,PT_Normal,,,,,Bb+bCsbq7Um3W3ei92yc9g,GiKDFYAJG0ySfcsfMw+Xmw,,,N,0,0,,,2013-10-27 21:41,2013-11-12 10:30,admin,admin
299,83445,1296,11429,1423,1,0,N,N,N,CP_Phys,TT_Task,DT_FixedDUR2,RV_OK,TK_NotStart,BEW/ST/OP14/4370,Formwork for Inner Sides & Wall,2511,3210.5,0,126,0,392,270,126,23,0,140,,,,2016-01-19 07:00,2016-02-07 17:00,,2014-08-19 08:30,2014-09-08 08:30,2014-08-19 08:30,2014-09-08 08:30,2014-08-19 08:30,2014-09-08 08:30,,2016-01-19 07:00,2016-02-07 17:00,,PT_Normal,,,,,1lEwrmO26kKKa77MikPpSA,WfRlKve9R0iNyOgZHIZbHQ,,,N,0,0,,,2013-10-27 21:41,2013-11-11 17:01,admin,admin
300,83446,1296,11429,1423,1,0,N,N,N,CP_Phys,TT_Task,DT_FixedDUR2,RV_OK,TK_NotStart,BEW/ST/OP14/4400,Reinforcement fixing at Sides,2511,3210.5,0,126,0,392,270,126,18,0,140,,,,2016-02-08 07:00,2016-02-25 17:00,,2014-09-08 08:30,2014-09-28 08:30,2014-09-08 08:30,2014-09-28 08:30,2014-09-08 08:30,2014-09-28 08:30,,2016-02-08 07:00,2016-02-25 17:00,,PT_Normal,,,,,we/UEXD6Y0SkM0EFFH/Kww,wP5GgTwoX0WqU2e4n+BZ+g,,,N,0,0,,,2013-10-27 21:41,2013-11-12 10:30,admin,admin
301,83447,1296,11429,1423,1,0,N,N,N,CP_Phys,TT_Task,DT_FixedDUR2,RV_OK,TK_NotStart,BEW/ST/OP14/4440,Concreting at sides,2511,3210.5,0,9,0,28,270,9,9,0,9,,,,2016-02-28 07:00,2016-02-28 17:00,,2014-09-28 08:30,2014-09-29 08:30,2014-09-28 08:30,2014-09-29 08:30,2014-09-28 08:30,2014-09-29 08:30,,2016-02-28 07:00,2016-02-28 17:00,,PT_Normal,,,,,Ajdz0851hUWaC3RGnhDc9g,OiRBK8OtR0SQEB0VUANjZA,,,N,0,0,,,2013-10-27 21:41,2013-11-11 17:01,admin,admin
302,83448,1296,11425,1423,1,0,N,N,N,CP_Phys,TT_Task,DT_FixedDUR2,RV_OK,TK_NotStart,BEW/ST/OP14/4460,Shuttering of Top Slab,2511,3210.5,0,135,0,420,270,135,18,0,150,,,,2016-03-03 07:00,2016-03-23 17:00,,2014-10-02 08:30,2014-10-27 09:30,2014-10-02 08:30,2014-10-27 09:30,2014-10-02 08:30,2014-10-27 09:30,,2016-03-03 07:00,2016-03-23 17:00,,PT_Normal,,,,,+Mtc+B3UbU+plwaqdLZnkg,YwM3aGfENEWgRwaIpEEuEg,,,N,0,0,,,2013-10-27 21:41,2013-11-12 10:30,admin,admin
303,83449,1296,11425,1423,1,0,N,N,N,CP_Phys,TT_Task,DT_FixedDUR2,RV_OK,TK_NotStart,BEW/ST/OP14/4480,Reinforcement fixing for Top Slab,2511,3210.5,0,126,0,392,270,126,18,0,140,,,,2016-03-13 07:00,2016-03-30 17:00,,2014-10-14 09:30,2014-11-03 09:30,2014-10-14 09:30,2014-11-03 09:30,2014-10-14 09:30,2014-11-03 09:30,,2016-03-13 07:00,2016-03-30 17:00,,PT_Normal,,,,,p6nNaPhEZUmoBoEslh7E7w,7zbGqQTdn06xjQzx6vXLtg,,,N,0,0,,,2013-10-27 21:41,2013-11-12 10:30,admin,admin
304,83450,1296,11425,1423,1,0,N,N,N,CP_Phys,TT_Task,DT_FixedDUR2,RV_OK,TK_NotStart,BEW/ST/OP14/4490,Concreting of Top Slab,2511,3210.5,0,9,0,28,270,9,18,0,10,,,,2016-03-31 07:00,2016-03-31 17:00,,2014-11-03 09:30,2014-11-04 09:30,2014-11-03 09:30,2014-11-04 09:30,2014-11-03 09:30,2014-11-04 09:30,,2016-03-31 07:00,2016-03-31 17:00,,PT_Normal,,,,,GdnnGHDZH0iFHZjGUvm3jw,qK96NC+DDE60lRsDeLsVOg,,,N,0,0,,,2013-10-27 21:41,2013-11-12 10:28,admin,admin
305,83451,1296,11425,1423,1,0,N,N,N,CP_Phys,TT_Task,DT_FixedDUR2,RV_OK,TK_NotStart,BEW/ST/OP14/4510,Removal of Staging,2511,3210.5,0,54,0,168,270,54,9,0,6,,,,2016-04-17 07:00,2016-04-24 17:00,,2014-11-19 09:30,2014-11-27 09:30,2014-11-19 09:30,2014-11-27 09:30,2014-11-19 09:30,2014-11-27 09:30,,2016-04-17 07:00,2016-04-24 17:00,,PT_Normal,,,,,vWGOwCzNIUC5TW8xWIl7PA,mTxV/Ew/J0mvpynmTpLtOQ,,,N,0,0,,,2013-10-27 21:41,2013-11-12 10:30,admin,admin
306,83452,1296,11425,1423,1,0,N,N,N,CP_Phys,TT_Task,DT_FixedDUR2,RV_OK,TK_NotStart,BEW/ST/OP14/4520,Miscellaneous Works,2511,3210.5,0,90,0,280,270,90,0,0,0,,,,2016-04-25 07:00,2016-05-09 17:00,,2014-11-27 09:30,2014-12-11 09:30,2014-11-27 09:30,2014-12-11 09:30,2014-11-27 09:30,2014-12-11 09:30,,2016-04-25 07:00,2016-05-09 17:00,,PT_Normal,,,,,MwW2gt3xikiwdhkwvbCVng,9yyrcmXrt02rgSoqfAzYMw,,,N,0,0,,,2013-10-27 21:41,2013-11-11 16:19,admin,admin
307,83453,1296,11423,1423,1,0,N,N,N,CP_Phys,TT_Task,DT_FixedDUR2,RV_OK,TK_NotStart,BEW/ST/OP14/4500,Stressing of the Structure including Grouting,2553,3210.5,0,45,0,180,270,45,9,0,45,,,,2016-04-10 07:00,2016-04-14 17:00,,2014-11-11 09:30,2014-11-19 09:30,2014-11-11 09:30,2014-11-19 09:30,2014-11-11 09:30,2014-11-19 09:30,,2016-04-10 07:00,2016-04-14 17:00,,PT_Normal,,,,,ME/EdPKyfky+WjFpFEy2jw,lsixxaR8okyIes6NFWa2pw,,,N,0,0,,,2013-10-27 21:41,2013-11-11 17:01,admin,admin
308,83454,1296,11149,1423,1,0,N,N,N,CP_Phys,TT_Task,DT_FixedDUR2,RV_OK,TK_NotStart,BEW/ST/OP14/4080,Excavation for MSE Wall - RHS,2553,3665.5,0,36,0,54,45,36,9,0,36,,,,2015-12-20 13:00,2015-12-27 12:00,,2014-05-04 08:30,2014-05-08 08:30,2014-05-04 08:30,2014-05-08 08:30,2014-05-04 08:30,2014-05-08 08:30,,2015-12-20 13:00,2015-12-27 12:00,,PT_Normal,,,,,L7p7luRCbECD2/uPzbWWqA,jbcsOSTwL06hsopvf5OM/g,,,N,0,0,,,2013-10-27 21:41,2013-11-11 17:01,admin,admin
309,83455,1296,11149,1423,1,0,N,N,N,CP_Phys,TT_Task,DT_FixedDUR2,RV_OK,TK_NotStart,BEW/ST/OP14/4100,Foundation For MSE Wall including Blinding RHS,2553,3921.5,0,108,0,432,180,108,18,0,216,,,,2016-02-04 07:00,2016-02-21 17:00,,2014-05-08 08:30,2014-05-27 08:30,2014-05-08 08:30,2014-05-27 08:30,2014-05-08 08:30,2014-05-27 08:30,,2016-02-04 07:00,2016-02-21 17:00,,PT_Normal,,,,,rxNRCLEfE0qMomJJu3h5hA,E5ag0RbolUmIg7FcLqAQ0w,,,N,0,0,,,2013-10-27 21:41,2013-11-11 16:19,admin,admin
310,83456,1296,11149,1423,1,0,N,N,N,CP_Phys,TT_Task,DT_FixedDUR2,RV_OK,TK_NotStart,BEW/ST/OP14/4190,Fixing of MSE Walls Pannels RHS,2553,3921.5,0,216,0,648,126,216,18,0,24,,,,2016-02-22 07:00,2016-03-24 17:00,,2014-05-27 08:30,2014-06-30 08:30,2014-05-27 08:30,2014-06-30 08:30,2014-05-27 08:30,2014-06-30 08:30,,2016-02-22 07:00,2016-03-24 17:00,,PT_Normal,,,,,Aj8F0A5YLkKyQqzpOR8AWw,VZOCZfIndUqULvTCq337ww,,,N,0,0,,,2013-10-27 21:41,2013-11-11 16:19,admin,admin
311,83457,1296,11149,1423,1,0,N,N,N,CP_Phys,TT_Task,DT_FixedDUR2,RV_OK,TK_NotStart,BEW/ST/OP14/4200,Earth filling & Embankment Preparation RHS,2553,3921.5,0,189,0,378,90,189,72,0,756,,,,2016-02-22 07:00,2016-03-21 17:00,,2014-05-27 08:30,2014-06-25 08:30,2014-05-27 08:30,2014-06-25 08:30,2014-05-27 08:30,2014-06-25 08:30,,2016-02-22 07:00,2016-03-21 17:00,,PT_Normal,,,,,+EY9tlLdxkuTe8N5dLQ9Kg,5qqNBz6A8kGKOYotpmxGgw,,,N,0,0,,,2013-10-27 21:41,2013-11-12 09:52,admin,admin
312,83458,1296,11149,1423,1,0,N,N,N,CP_Phys,TT_Task,DT_FixedDUR2,RV_OK,TK_NotStart,BEW/ST/OP14/4270,Granular Sub-Base RHS,2553,3921.5,0,135,0,270,72,135,63,0,180,,,,2016-03-22 07:00,2016-04-11 17:00,,2014-06-25 08:30,2014-07-16 08:30,2014-06-25 08:30,2014-07-16 08:30,2014-06-25 08:30,2014-07-16 08:30,,2016-03-22 07:00,2016-04-11 17:00,,PT_Normal,,,,,Eawvwnw8F0yhP2mzYGD8qw,rR82FGiQZ0CBiZDHbnyHlw,,,N,0,0,,,2013-10-27 21:41,2013-11-11 23:01,admin,admin
313,83459,1296,11149,1423,1,0,N,N,N,CP_Phys,TT_Task,DT_FixedDUR2,RV_OK,TK_NotStart,BEW/ST/OP14/4420,Aggregate Base Course,2553,3665.5,0,90,0,180,90,90,74,0,110,,,,2016-04-25 07:00,2016-05-09 17:00,,2014-09-14 13:30,2014-09-28 13:30,2014-09-14 13:30,2014-09-28 13:30,2014-09-14 13:30,2014-09-28 13:30,,2016-04-25 07:00,2016-05-09 17:00,,PT_Normal,,,,,XtdcGYSDGEuQrUFHKVsvjw,vePa6KA630OmGM22MaSMCw,,,N,0,0,,,2013-10-27 21:41,2013-11-12 09:57,admin,admin
314,83460,1296,11149,1423,1,0,N,N,N,CP_Phys,TT_Task,DT_FixedDUR2,RV_OK,TK_NotStart,BEW/ST/OP14/4450,Crash Barrier & Median Works,2553,3665.5,455,180,0,720,162,180,18,0,360,,,,2016-05-10 07:00,2016-06-06 17:00,,2014-09-28 13:30,2014-10-28 14:30,2014-09-28 13:30,2014-10-28 14:30,2014-09-28 13:30,2014-10-28 14:30,,2016-05-10 07:00,2016-06-06 17:00,,PT_Normal,,,,,jJZN4psoTk6bKXk/LQS2Pg,/WFdxhd6j0ax1aPscxCZ9g,,,N,0,0,,,2013-10-27 21:41,2013-11-11 16:19,admin,admin
315,83461,1296,11149,1423,1,0,N,N,N,CP_Phys,TT_Task,DT_FixedDUR2,RV_OK,TK_NotStart,BEW/ST/OP14/4530,Bituminous Base Course Including IC,2553,3210.5,0,90,0,180,90,90,76,0,60,,,,2016-05-10 07:00,2016-05-23 17:00,,2014-12-11 09:30,2014-12-25 09:30,2014-12-11 09:30,2014-12-25 09:30,2014-12-11 09:30,2014-12-25 09:30,,2016-05-10 07:00,2016-05-23 17:00,,PT_Normal,,,,,BWrTyXk12k+Z2lI4ZPzs5Q,kZHiqX+mUkW1i3I/kdCbpA,,,N,0,0,,,2013-10-27 21:41,2013-11-12 10:02,admin,admin
316,83462,1296,11149,1423,1,0,N,N,N,CP_Phys,TT_Task,DT_FixedDUR2,RV_OK,TK_NotStart,BEW/ST/OP14/4550,Bituminous Wearing Course,2553,3210.5,0,90,0,180,90,90,78,0,70,,,,2016-05-24 07:00,2016-06-06 17:00,,2014-12-25 09:30,2015-01-11 09:30,2014-12-25 09:30,2015-01-11 09:30,2014-12-25 09:30,2015-01-11 09:30,,2016-05-24 07:00,2016-06-06 17:00,,PT_Normal,,,,,O0XaVJmB/UqggIQWmbYeGw,2umvr6GIvkSXqUf1yopMYw,,,N,0,0,,,2013-10-27 21:41,2013-11-11 22:51,admin,admin
317,83463,1296,11149,1423,1,0,N,N,N,CP_Phys,TT_Task,DT_FixedDUR2,RV_OK,TK_NotStart,BEW/ST/OP14/4570,Miscellaneous Works,2553,3210.5,0,90,0,180,108,90,0,0,0,,,,2016-06-07 07:00,2016-06-20 17:00,,2015-01-11 09:30,2015-01-25 09:30,2015-01-11 09:30,2015-01-25 09:30,2015-01-11 09:30,2015-01-25 09:30,,2016-06-07 07:00,2016-06-20 17:00,,PT_Normal,,,,,pEuuqn43OE6XHLswOkNGcA,olKmlr1BQEOFLSUiUjMkdw,,,N,0,0,,,2013-10-27 21:41,2013-11-11 16:19,admin,admin
318,83464,1296,11256,1423,1,0,N,N,N,CP_Drtn,TT_Task,DT_FixedDUR2,RV_OK,TK_NotStart,BEW/ST/OP14/4000,Structural Excavation,2511,3210.5,0,40,0,240,54,36,27,0,26.5,,,,2015-09-01 14:00,2015-09-08 08:00,,2014-03-27 15:30,2014-04-03 09:30,2014-03-27 15:30,2014-04-03 09:30,2014-03-27 15:30,2014-04-02 15:30,,2015-09-01 14:00,2015-09-08 08:00,,PT_Normal,,,,,916avVsu/02klioUlBEI9g,2yie8oTWJkO1NRuTu2Dgsg,,,N,0,0,,,2013-10-27 21:41,2013-11-11 17:01,admin,admin
319,83465,1296,11252,1423,1,0,N,N,N,CP_Phys,TT_Task,DT_FixedDUR2,RV_OK,TK_NotStart,BEW/ST/OP14/4040,PCC & Pile Head Breaking,2553,3210.5,0,54,0,64,72,54,0,0,0,,,,2015-09-22 13:00,2015-09-30 12:00,,2014-04-17 14:30,2014-04-27 14:30,2014-04-17 14:30,2014-04-27 14:30,2014-04-17 14:30,2014-04-27 14:30,,2015-09-22 13:00,2015-09-30 12:00,,PT_Normal,,,,,IwBMXBFJOE6/xCmyajNQbQ,3/nswecqvk+TyC3bQK6lBw,,,N,0,0,,,2013-10-27 21:41,2013-11-12 10:47,admin,admin
320,83466,1296,11252,1423,1,0,N,N,N,CP_Phys,TT_Task,DT_FixedDUR2,RV_OK,TK_NotStart,BEW/ST/OP14/4060,Concreting for Pile Cap / Abutment Foundation,2511,3304.5,0,81,0,252,144,81,18,0,162,,,,2015-10-18 07:00,2015-10-28 17:00,,2014-04-27 14:30,2014-05-08 14:30,2014-04-27 14:30,2014-05-08 14:30,2014-04-27 14:30,2014-05-08 14:30,,2015-10-18 07:00,2015-10-28 17:00,,PT_Normal,,,,,7dT5pJvrM0eiY+muFK1Hww,jzHJyn4XGEKhqVzmiW/Yww,,,N,0,0,,,2013-10-27 21:41,2013-11-11 17:01,admin,admin
321,83467,1296,11252,1423,1,0,N,N,N,CP_Phys,TT_Task,DT_FixedDUR2,RV_OK,TK_NotStart,BEW/ST/OP14/4120,Conceting including Formwork & Reinforcement fixing for Abutment,2511,3304.5,94,126,0,392,144,126,18,0,252,,,,2015-10-29 07:00,2015-11-17 17:00,,2014-05-08 14:30,2014-05-29 14:30,2014-05-08 14:30,2014-05-29 14:30,2014-05-08 14:30,2014-05-29 14:30,,2015-10-29 07:00,2015-11-17 17:00,,PT_Normal,,,,,Th/AdrdGt0+EBzpgHjoeaw,bUZKAx5KWUmhzSqxmjtVog,,,N,0,0,,,2013-10-27 21:41,2013-11-11 17:01,admin,admin
322,83468,1296,11252,1423,1,0,N,N,N,CP_Drtn,TT_Task,DT_FixedDUR2,RV_OK,TK_NotStart,BEW/ST/OP14/4030,Structural Excavation,2511,3210.5,0,40,0,240,54,36,27,0,26.5,,,,2015-09-16 08:00,2015-09-22 12:00,,2014-04-13 09:30,2014-04-17 14:30,2014-04-13 09:30,2014-04-17 14:30,2014-04-13 09:30,2014-04-17 09:30,,2015-09-16 08:00,2015-09-22 12:00,,PT_Normal,,,,,+9ievOcUJEC+kMKKExHntA,zXc7Poilz0avglTwTzM+kQ,,,N,0,0,,,2013-10-27 21:41,2013-11-11 17:01,admin,admin
323,83469,1296,11253,1423,1,0,N,N,N,CP_Phys,TT_Task,DT_FixedDUR2,RV_OK,TK_NotStart,BEW/ST/OP14/4090,PCC & Pile Head Breaking,2553,3210.5,0,54,0,64,72,54,0,0,0,,,,2015-10-07 07:00,2015-10-15 17:00,,2014-05-04 08:30,2014-05-12 08:30,2014-05-04 08:30,2014-05-12 08:30,2014-05-04 08:30,2014-05-12 08:30,,2015-10-07 07:00,2015-10-15 17:00,,PT_Normal,,,,,OkC9lR5cbUWrlV/M/H8puA,lkhrWCMKKUeISyyu5bjGFQ,,,N,0,0,,,2013-10-27 21:41,2013-11-12 10:47,admin,admin
324,83470,1296,11253,1423,1,0,N,N,N,CP_Phys,TT_Task,DT_FixedDUR2,RV_OK,TK_NotStart,BEW/ST/OP14/4130,Concreting for Pile Cap / Pier Foundation,2511,3210.5,0,81,0,252,144,81,18,0,162,,,,2015-10-18 07:00,2015-10-28 17:00,,2014-05-12 08:30,2014-05-26 08:30,2014-05-12 08:30,2014-05-26 08:30,2014-05-12 08:30,2014-05-26 08:30,,2015-10-18 07:00,2015-10-28 17:00,,PT_Normal,,,,,/qcmbQ4+Zk2EQvQyfYaCYw,xkutcTTkh0yPee3XAak0mg,,,N,0,0,,,2013-10-27 21:41,2013-11-11 17:01,admin,admin
325,83471,1296,11253,1423,1,0,N,N,N,CP_Phys,TT_Task,DT_FixedDUR2,RV_OK,TK_NotStart,BEW/ST/OP14/4180,Conceting including Formwork & Reinforcement fixing for Pier,2511,3210.5,0,126,0,392,144,126,18,0,252,,,,2015-10-29 07:00,2015-11-17 17:00,,2014-05-26 08:30,2014-06-15 08:30,2014-05-26 08:30,2014-06-15 08:30,2014-05-26 08:30,2014-06-15 08:30,,2015-10-29 07:00,2015-11-17 17:00,,PT_Normal,,,,,qBoZ+O1Z0kiGCnQPyfTxwg,WwD7QgMUQEm6YBi+8khzhA,,,N,0,0,,,2013-10-27 21:41,2013-11-11 17:01,admin,admin
326,83472,1296,11253,1423,1,0,N,N,N,CP_Drtn,TT_Task,DT_FixedDUR2,RV_OK,TK_NotStart,BEW/ST/OP14/4070,Structural Excavation,2511,3210.5,0,40,0,240,54,36,27,0,26.5,,,,2015-09-30 13:00,2015-10-06 17:00,,2014-04-27 14:30,2014-05-04 08:30,2014-04-27 14:30,2014-05-04 08:30,2014-04-27 14:30,2014-05-01 14:30,,2015-09-30 13:00,2015-10-06 17:00,,PT_Normal,,,,,RAmzDkUCykuTzhsq7LEEEg,dWHU1x1BdEaSQI/TOQ2olA,,,N,0,0,,,2013-10-27 21:41,2013-11-11 17:01,admin,admin
327,83473,1296,11149,1423,1,0,N,N,N,CP_Drtn,TT_Task,DT_FixedDUR2,RV_OK,TK_NotStart,BEW/ST/OP14/4110,Excavation for MSE Wall - LHS,2553,3665.5,0,40,0,80,49,40,9,0,40,,,,2015-12-27 13:00,2015-12-31 17:00,,2014-05-08 08:30,2014-05-14 13:30,2014-05-08 08:30,2014-05-14 13:30,2014-05-08 08:30,2014-05-14 13:30,,2015-12-27 13:00,2015-12-31 17:00,,PT_Normal,,,,,ow9Q1IyoakWqDpdtFV12Jg,R7qv8VFw2kGGTWUAk+GGtQ,,,N,0,0,,,2013-10-27 21:41,2013-11-11 17:01,admin,admin
328,83474,1296,11149,1423,1,0,N,N,N,CP_Drtn,TT_Task,DT_FixedDUR2,RV_OK,TK_NotStart,BEW/ST/OP14/4140,Foundation For MSE Wall including Blinding LHS,2553,3665.5,0,108,0,432,180,108,18,0,216,,,,2016-01-03 07:00,2016-01-18 17:00,,2014-05-14 13:30,2014-06-02 13:30,2014-05-14 13:30,2014-06-02 13:30,2014-05-14 13:30,2014-06-02 13:30,,2016-01-03 07:00,2016-01-18 17:00,,PT_Normal,,,,,I5xtL47v8EupEGk5I75Ikw,BWGuECgN4EmWsM4eYmeCOA,,,N,0,0,,,2013-10-27 21:41,2013-11-11 16:19,admin,admin
329,83475,1296,11149,1423,1,0,N,N,N,CP_Drtn,TT_Task,DT_FixedDUR2,RV_OK,TK_NotStart,BEW/ST/OP14/4220,Fixing of MSE Walls Pannels LHS,2553,3665.5,0,216,0,648,126,216,18,0,216,,,,2016-01-19 07:00,2016-02-21 17:00,,2014-06-02 13:30,2014-07-06 13:30,2014-06-02 13:30,2014-07-06 13:30,2014-06-02 13:30,2014-07-06 13:30,,2016-01-19 07:00,2016-02-21 17:00,,PT_Normal,,,,,aeN9VSHtHEybQbLJ/Lbnng,5KLAO5dD3E+NhDkNAWrL5A,,,N,0,0,,,2013-10-27 21:41,2013-11-11 16:19,admin,admin
330,83476,1296,11149,1423,1,0,N,N,N,CP_Drtn,TT_Task,DT_FixedDUR2,RV_OK,TK_NotStart,BEW/ST/OP14/4300,Earth filling & Embankment Preparation LHS,2553,3665.5,0,189,0,378,90,189,72,0,756,,,,2016-02-22 07:00,2016-03-21 17:00,,2014-07-06 13:30,2014-08-11 13:30,2014-07-06 13:30,2014-08-11 13:30,2014-07-06 13:30,2014-08-11 13:30,,2016-02-22 07:00,2016-03-21 17:00,,PT_Normal,,,,,KKwFQnLsDkCtB0EPlicPnQ,Z88Y1q7ML06lIBWALKk4zQ,,,N,0,0,,,2013-10-27 21:41,2013-11-12 09:52,admin,admin
331,83477,1296,11149,1423,1,0,N,N,N,CP_Drtn,TT_Task,DT_FixedDUR2,RV_OK,TK_NotStart,BEW/ST/OP14/4360,Granular Sub-Base LHS,2553,3665.5,0,135,0,270,72,135,63,0,540,,,,2016-03-22 07:00,2016-04-11 17:00,,2014-08-11 13:30,2014-09-01 13:30,2014-08-11 13:30,2014-09-01 13:30,2014-08-11 13:30,2014-09-01 13:30,,2016-03-22 07:00,2016-04-11 17:00,,PT_Normal,,,,,79v/d211PEi2e1FOMbzypg,/sM4FvJr+km3UclGVimCHg,,,N,0,0,,,2013-10-27 21:41,2013-11-11 23:01,admin,admin
332,83478,1296,11149,1423,1,0,N,N,N,CP_Drtn,TT_Task,DT_FixedDUR2,RV_OK,TK_NotStart,BEW/ST/OP14/4320,Concreting of Approch Slab RHS,2553,3921.5,256,81,0,324,90,81,9,0,81,,,,2016-04-12 07:00,2016-04-24 17:00,,2014-07-16 08:30,2014-08-05 08:30,2014-07-16 08:30,2014-08-05 08:30,2014-07-16 08:30,2014-08-05 08:30,,2016-04-12 07:00,2016-04-24 17:00,,PT_Normal,,,,,cBaKyACQAUmuBqugKe8/vQ,mSfVP0JDsUmXsgqGuU0v/A,,,N,0,0,,,2013-10-27 21:41,2013-11-11 16:19,admin,admin
333,83479,1296,11149,1423,1,0,N,N,N,CP_Drtn,TT_Task,DT_FixedDUR2,RV_OK,TK_NotStart,BEW/ST/OP14/4390,Concreting of Approch Slab LHS,2553,3665.5,0,81,0,324,90,81,9,0,81,,,,2016-04-12 07:00,2016-04-24 17:00,,2014-09-01 13:30,2014-09-14 13:30,2014-09-01 13:30,2014-09-14 13:30,2014-09-01 13:30,2014-09-14 13:30,,2016-04-12 07:00,2016-04-24 17:00,,PT_Normal,,,,,xyIPE/JglU+psMmlVqoKIg,td1GetfG9UyZxYWUb1NsRQ,,,N,0,0,,,2013-10-27 21:41,2013-11-11 16:19,admin,admin
334,83480,1296,11150,1423,1,0,N,N,N,CP_Phys,TT_Task,DT_FixedDUR2,RV_OK,TK_NotStart,BEW/ST/OP14/4150,Excavation for MSE Wall - RHS,2553,3679.5,0,36,0,54,45,36,9,0,36,,,,2016-01-04 13:00,2016-01-10 12:00,,2014-05-14 13:30,2014-05-20 13:30,2014-05-14 13:30,2014-05-20 13:30,2014-05-14 13:30,2014-05-20 13:30,,2016-01-04 13:00,2016-01-10 12:00,,PT_Normal,,,,,TkiKHARyfUeKpXNX0sj13A,hEIPvmF3tUuQF92Ty+cpuw,,,N,0,0,,,2013-10-27 21:41,2013-11-11 17:01,admin,admin
335,83481,1296,11150,1423,1,0,N,N,N,CP_Phys,TT_Task,DT_FixedDUR2,RV_OK,TK_NotStart,BEW/ST/OP14/4160,Foundation For MSE Wall including Blinding RHS,2553,3935.5,0,108,0,432,180,108,18,0,216,,,,2016-02-18 07:00,2016-03-06 17:00,,2014-05-20 13:30,2014-06-08 13:30,2014-05-20 13:30,2014-06-08 13:30,2014-05-20 13:30,2014-06-08 13:30,,2016-02-18 07:00,2016-03-06 17:00,,PT_Normal,,,,,iPrygIyKfEqq1CvEdtfh7w,jH/XhKyYi0OX7HANfoXoYA,,,N,0,0,,,2013-10-27 21:41,2013-11-11 13:08,admin,admin
336,83482,1296,11150,1423,1,0,N,N,N,CP_Phys,TT_Task,DT_FixedDUR2,RV_OK,TK_NotStart,BEW/ST/OP14/4230,Fixing of MSE Walls Pannels RHS,2553,3935.5,0,216,0,648,126,216,18,0,24,,,,2016-03-07 07:00,2016-04-07 17:00,,2014-06-08 13:30,2014-07-10 13:30,2014-06-08 13:30,2014-07-10 13:30,2014-06-08 13:30,2014-07-10 13:30,,2016-03-07 07:00,2016-04-07 17:00,,PT_Normal,,,,,QtJOYjph2UyZxYZfCvpgtw,CdUUH65JuUegW6BLu5beAw,,,N,0,0,,,2013-10-27 21:41,2013-11-09 22:51,admin,admin
337,83483,1296,11150,1423,1,0,N,N,N,CP_Phys,TT_Task,DT_FixedDUR2,RV_OK,TK_NotStart,BEW/ST/OP14/4240,Earth filling & Embankment Preparation RHS,2553,3935.5,0,189,0,378,90,189,72,0,756,,,,2016-03-07 07:00,2016-04-04 17:00,,2014-06-08 13:30,2014-07-07 13:30,2014-06-08 13:30,2014-07-07 13:30,2014-06-08 13:30,2014-07-07 13:30,,2016-03-07 07:00,2016-04-04 17:00,,PT_Normal,,,,,e59PHBKF9Ea15K//e5X49w,lIE9qc4gGUSBKWcY7XAk/A,,,N,0,0,,,2013-10-27 21:41,2013-11-12 09:52,admin,admin
338,83484,1296,11150,1423,1,0,N,N,N,CP_Phys,TT_Task,DT_FixedDUR2,RV_OK,TK_NotStart,BEW/ST/OP14/4310,Granular Sub-Base RHS,2553,3935.5,0,135,0,270,72,135,63,0,180,,,,2016-04-05 07:00,2016-04-25 17:00,,2014-07-07 13:30,2014-08-04 13:30,2014-07-07 13:30,2014-08-04 13:30,2014-07-07 13:30,2014-08-04 13:30,,2016-04-05 07:00,2016-04-25 17:00,,PT_Normal,,,,,nwNDW19st0q5h8Kn1BkFrA,G61+gshUJ0GiK5XhvkCZOA,,,N,0,0,,,2013-10-27 21:41,2013-11-11 23:01,admin,admin
339,83485,1296,11150,1423,1,0,N,N,N,CP_Phys,TT_Task,DT_FixedDUR2,RV_OK,TK_NotStart,BEW/ST/OP14/4430,Aggregate Base Course,2553,3679.5,0,90,0,180,90,90,74,0,110,,,,2016-05-10 07:00,2016-05-23 17:00,,2014-09-25 07:30,2014-10-13 08:30,2014-09-25 07:30,2014-10-13 08:30,2014-09-25 07:30,2014-10-13 08:30,,2016-05-10 07:00,2016-05-23 17:00,,PT_Normal,,,,,R903sRoTD0eLrlvCguDTyQ,+I7G2LVHEEejexeeFnDNFA,,,N,0,0,,,2013-10-27 21:41,2013-11-12 09:57,admin,admin
340,83486,1296,11150,1423,1,0,N,N,N,CP_Phys,TT_Task,DT_FixedDUR2,RV_OK,TK_NotStart,BEW/ST/OP14/4470,Crash Barrier & Median Works,2553,3679.5,469,180,0,720,162,180,18,0,360,,,,2016-05-24 07:00,2016-06-20 17:00,,2014-10-13 08:30,2014-11-10 08:30,2014-10-13 08:30,2014-11-10 08:30,2014-10-13 08:30,2014-11-10 08:30,,2016-05-24 07:00,2016-06-20 17:00,,PT_Normal,,,,,A54ggufOPk2HVaJncwRKbA,CSo8DYVo0Uih52ZW92C/4w,,,N,0,0,,,2013-10-27 21:41,2013-11-11 16:19,admin,admin
341,83487,1296,11150,1423,1,0,N,N,N,CP_Phys,TT_Task,DT_FixedDUR2,RV_OK,TK_NotStart,BEW/ST/OP14/4540,Bituminous Base Course Including IC,2553,3300.5,0,90,0,180,90,90,76,0,60,,,,2016-05-24 07:00,2016-06-06 17:00,,2014-12-11 09:30,2014-12-25 09:30,2014-12-11 09:30,2014-12-25 09:30,2014-12-11 09:30,2014-12-25 09:30,,2016-05-24 07:00,2016-06-06 17:00,,PT_Normal,,,,,4uQzRpemIkyikalSsA++zA,fs1RLwfTpkS+F0uO9z2DSQ,,,N,0,0,,,2013-10-27 21:41,2013-11-12 10:02,admin,admin
342,83488,1296,11150,1423,1,0,N,N,N,CP_Phys,TT_Task,DT_FixedDUR2,RV_OK,TK_NotStart,BEW/ST/OP14/4560,Bituminous Wearing Course,2553,3300.5,90,90,0,180,90,90,78,0,70,,,,2016-06-07 07:00,2016-06-20 17:00,,2014-12-25 09:30,2015-01-11 09:30,2014-12-25 09:30,2015-01-11 09:30,2014-12-25 09:30,2015-01-11 09:30,,2016-06-07 07:00,2016-06-20 17:00,,PT_Normal,,,,,OVQahjMVl0qPD7a8Wc2FYg,SLpvela+q0e1PVt/Cd/mZg,,,N,0,0,,,2013-10-27 21:41,2013-11-11 22:51,admin,admin
343,83489,1296,11150,1423,1,0,N,N,N,CP_Phys,TT_Task,DT_FixedDUR2,RV_OK,TK_NotStart,BEW/ST/OP14/4580,Miscellaneous Works,2553,3210.5,0,90,0,180,108,90,0,0,0,,,,2016-06-21 07:00,2016-07-04 17:00,,2015-01-25 09:30,2015-02-08 09:30,2015-01-25 09:30,2015-02-08 09:30,2015-01-25 09:30,2015-02-08 09:30,,2016-06-21 07:00,2016-07-04 17:00,,PT_Normal,,,,,PCjd0p8gAEqInQB9rHXvmA,H97JKlB5eUWHKpx5NVluHg,,,N,0,0,,,2013-10-27 21:41,2013-11-11 16:19,admin,admin
344,83490,1296,11150,1423,1,0,N,N,N,CP_Drtn,TT_Task,DT_FixedDUR2,RV_OK,TK_NotStart,BEW/ST/OP14/4170,Excavation for MSE Wall - LHS,2553,3679.5,0,40,0,80,49,40,9,0,40,,,,2016-01-10 13:00,2016-01-14 17:00,,2014-05-20 13:30,2014-05-28 07:30,2014-05-20 13:30,2014-05-28 07:30,2014-05-20 13:30,2014-05-28 07:30,,2016-01-10 13:00,2016-01-14 17:00,,PT_Normal,,,,,hjTZZHOeyE++L5Yxc1cB/w,NRjQrniqmUK+ACrL7h2W5A,,,N,0,0,,,2013-10-27 21:41,2013-11-11 17:01,admin,admin
345,83491,1296,11150,1423,1,0,N,N,N,CP_Drtn,TT_Task,DT_FixedDUR2,RV_OK,TK_NotStart,BEW/ST/OP14/4210,Foundation For MSE Wall including Blinding LHS,2553,3679.5,0,108,0,432,180,108,18,0,216,,,,2016-01-17 07:00,2016-02-01 17:00,,2014-05-28 07:30,2014-06-15 07:30,2014-05-28 07:30,2014-06-15 07:30,2014-05-28 07:30,2014-06-15 07:30,,2016-01-17 07:00,2016-02-01 17:00,,PT_Normal,,,,,SpsiCjODcEGJIVBCuBkMIg,ZHko8LVIp0WZfW1Oa3TGWg,,,N,0,0,,,2013-10-27 21:41,2013-11-11 13:08,admin,admin
346,83492,1296,11150,1423,1,0,N,N,N,CP_Drtn,TT_Task,DT_FixedDUR2,RV_OK,TK_NotStart,BEW/ST/OP14/4250,Fixing of MSE Walls Pannels LHS,2553,3679.5,0,216,0,648,126,216,18,0,216,,,,2016-02-02 07:00,2016-03-06 17:00,,2014-06-15 07:30,2014-07-17 07:30,2014-06-15 07:30,2014-07-17 07:30,2014-06-15 07:30,2014-07-17 07:30,,2016-02-02 07:00,2016-03-06 17:00,,PT_Normal,,,,,5D24G+oVzkKQC3tLor3tGA,q500EFfRqUK/Xr5A96BF9g,,,N,0,0,,,2013-10-27 21:41,2013-11-09 22:51,admin,admin
347,83493,1296,11150,1423,1,0,N,N,N,CP_Drtn,TT_Task,DT_FixedDUR2,RV_OK,TK_NotStart,BEW/ST/OP14/4330,Earth filling & Embankment Preparation LHS,2553,3679.5,0,189,0,378,90,189,72,0,756,,,,2016-03-07 07:00,2016-04-04 17:00,,2014-07-17 07:30,2014-08-24 07:30,2014-07-17 07:30,2014-08-24 07:30,2014-07-17 07:30,2014-08-24 07:30,,2016-03-07 07:00,2016-04-04 17:00,,PT_Normal,,,,,HG70nABUZEuceBWBbiEDwg,jR0K4UrIwEG9jLbjoxQxZA,,,N,0,0,,,2013-10-27 21:41,2013-11-12 09:52,admin,admin
348,83494,1296,11150,1423,1,0,N,N,N,CP_Drtn,TT_Task,DT_FixedDUR2,RV_OK,TK_NotStart,BEW/ST/OP14/4380,Granular Sub-Base LHS,2553,3679.5,0,135,0,270,72,135,63,0,540,,,,2016-04-05 07:00,2016-04-25 17:00,,2014-08-24 07:30,2014-09-14 07:30,2014-08-24 07:30,2014-09-14 07:30,2014-08-24 07:30,2014-09-14 07:30,,2016-04-05 07:00,2016-04-25 17:00,,PT_Normal,,,,,DQGaL/OH8EODkB3GnEL70A,QW3naApELkmQNRi5gpnVPw,,,N,0,0,,,2013-10-27 21:41,2013-11-11 23:01,admin,admin
349,83495,1296,11150,1423,1,0,N,N,N,CP_Drtn,TT_Task,DT_FixedDUR2,RV_OK,TK_NotStart,BEW/ST/OP14/4350,Concreting of Approch Slab RHS,2553,3935.5,256,81,0,324,90,81,9,0,81,,,,2016-04-26 07:00,2016-05-09 17:00,,2014-08-04 13:30,2014-08-17 13:30,2014-08-04 13:30,2014-08-17 13:30,2014-08-04 13:30,2014-08-17 13:30,,2016-04-26 07:00,2016-05-09 17:00,,PT_Normal,,,,,o/9aGoMqT0eHkOJJjCM6SA,Abc/R2bvn0GU5RaFWvKz4g,,,N,0,0,,,2013-10-27 21:41,2013-11-09 22:51,admin,admin
350,83496,1296,11150,1423,1,0,N,N,N,CP_Drtn,TT_Task,DT_FixedDUR2,RV_OK,TK_NotStart,BEW/ST/OP14/4410,Concreting of Approch Slab LHS,2553,3679.5,0,81,0,324,90,81,9,0,81,,,,2016-04-26 07:00,2016-05-09 17:00,,2014-09-14 07:30,2014-09-25 07:30,2014-09-14 07:30,2014-09-25 07:30,2014-09-14 07:30,2014-09-25 07:30,,2016-04-26 07:00,2016-05-09 17:00,,PT_Normal,,,,,r/AKCGIWSUqhn+KhtWW8FQ,pddLejeOG0CeAs5nuTdiLg,,,N,0,0,,,2013-10-27 21:41,2013-11-09 22:51,admin,admin
351,83733,1296,10994,1423,1,0,N,N,N,CP_Drtn,TT_Task,DT_FixedDUR2,RV_OK,TK_NotStart,BEW/ST/PL/2190,Piling at Overpass 10,2553,4023.5,0,126,0,160,206,126,63,0,160,,,,2016-04-04 07:00,2016-04-21 17:00,,2014-06-22 15:30,2014-07-10 15:30,2014-06-22 15:30,2014-07-10 15:30,2014-06-22 15:30,2014-07-10 15:30,,2016-04-04 07:00,2016-04-21 17:00,,PT_Normal,,,,,RyUJQVSNLkeoccjlWQ4hsA,,,,N,0,0,,,2013-10-28 13:17,2013-11-12 10:36,NotPrmUser,admin
352,83734,1296,10994,1423,1,0,N,N,N,CP_Drtn,TT_Task,DT_FixedDUR2,RV_OK,TK_NotStart,BEW/ST/PL/2280,Piling at Overpass 13,2553,3906.5,0,126,0,160,206,126,63,0,160,,,,2016-06-30 07:00,2016-07-25 17:00,,2014-10-14 16:30,2014-11-03 16:30,2014-10-14 16:30,2014-11-03 16:30,2014-10-14 16:30,2014-11-03 16:30,,2016-06-30 07:00,2016-07-25 17:00,,PT_Normal,,,,,SVy1FlP7PE6Xn9sqvir5og,,,,N,0,0,,,2013-10-28 13:18,2013-11-12 10:36,NotPrmUser,admin
353,83735,1296,11135,1423,1,0,N,N,N,CP_Drtn,TT_Task,DT_FixedDUR2,RV_OK,TK_NotStart,BEW/RD/DRG/1070,Construction of Box Culvert at 90+601,2553,4923.5,342,369,0,1107,180,369,0,0,0,,,,2016-06-16 07:00,2016-08-17 17:00,,2014-04-14 15:30,2014-06-11 15:30,2014-04-14 15:30,2014-06-11 15:30,2014-04-14 15:30,2014-06-11 15:30,,2016-06-16 07:00,2016-08-17 17:00,,PT_Normal,,,,,cu9V6YTu6EOn41u+vIrZWQ,,,,N,0,0,,,2013-10-30 13:06,2013-11-12 17:51,admin,admin
354,84262,1296,11420,1423,1,0,N,N,N,CP_Phys,TT_Task,DT_FixedDUR2,RV_OK,TK_NotStart,BEW/ST/WB4/2030,Placing of I - Girders on temp Support Span 1 - 4,2511,3782.5,0,144,0,195.999999,144,144,18,0,51.999999,,,,2015-12-31 07:00,2016-01-21 17:00,,2014-04-24 13:30,2014-05-18 13:30,2014-04-24 13:30,2014-05-18 13:30,2014-04-24 13:30,2014-05-18 13:30,,2015-12-31 07:00,2016-01-21 17:00,,PT_Normal,,,,,fPBE2CaVN0e+1J3hkRWb+Q,T6tcyC2rtk2lYrhtvYqwoQ,,,N,0,0,,,2013-11-01 17:00,2013-11-11 16:19,admin,admin
355,84263,1296,11420,1423,1,0,N,N,N,CP_Phys,TT_Task,DT_FixedDUR2,RV_OK,TK_NotStart,BEW/ST/WB4/2060,Pre-Cast Slab Placing Span 1-4 & Diaphram Wall,2511,3845.5,0,144,0,483.999999,180,144,9,0,9,,,,2016-01-18 07:00,2016-02-08 17:00,,2014-05-01 13:30,2014-05-26 13:30,2014-05-01 13:30,2014-05-26 13:30,2014-05-01 13:30,2014-05-26 13:30,,2016-01-18 07:00,2016-02-08 17:00,,PT_Normal,,,,,Z3jpjLRDTUek+4dcCywY4g,e9OooY5uTkS0wg+GrdyG8g,,,N,0,0,,,2013-11-01 17:00,2013-11-11 16:19,admin,admin
356,84264,1296,11420,1423,1,0,N,N,N,CP_Phys,TT_Task,DT_FixedDUR2,RV_OK,TK_NotStart,BEW/ST/WB4/2070,"Span 1-4, Slab Casting including Staging, Shuttering & Rienforcement fixing and bearing",2511,3845.5,63,180,0,604.999999,288,180,9,0,64.999999,,,,2016-02-09 07:00,2016-03-07 17:00,,2014-05-26 13:30,2014-06-23 13:30,2014-05-26 13:30,2014-06-23 13:30,2014-05-26 13:30,2014-06-23 13:30,,2016-02-09 07:00,2016-03-07 17:00,,PT_Normal,,,,,QNaSytmOuk2DZWSRra5V/g,77x1a6iz506BjiNohiCdSQ,,,N,0,0,,,2013-11-01 17:00,2013-11-11 16:19,admin,admin
357,84265,1296,11420,1423,1,0,N,N,N,CP_Phys,TT_Task,DT_FixedDUR2,RV_OK,TK_NotStart,BEW/ST/WB4/2190,Casting of Concrete Bridge Parapet,2511,3782.5,0,216,0,679,162,216,9,0,216,,,,2016-04-05 07:00,2016-05-09 17:00,,2014-08-06 13:30,2014-09-09 13:30,2014-08-06 13:30,2014-09-09 13:30,2014-08-06 13:30,2014-09-09 13:30,,2016-04-05 07:00,2016-05-09 17:00,,PT_Normal,,,,,oqNMImypVkeHuGXdw1pmlw,xzyY1Kv250SA1J0dUtKWGA,,,N,0,0,,,2013-11-01 17:00,2013-11-11 22:57,admin,admin
358,84266,1296,11378,1423,1,0,N,N,N,CP_Phys,TT_Task,DT_FixedDUR2,RV_OK,TK_NotStart,BEW/ST/WB4/1120,PCC & Pile Head Breaking,2553,3844.5,0,54,0,64,72,54,0,0,0,,,,2015-11-16 07:00,2015-11-24 17:00,,2014-03-03 14:30,2014-03-11 14:30,2014-03-03 14:30,2014-03-11 14:30,2014-03-03 14:30,2014-03-11 14:30,,2015-11-16 07:00,2015-11-24 17:00,,PT_Normal,,,,,K0Zd1AdodkaocTye303KCA,OGdQLJ6exEm0L7/CTP1/jw,,,N,0,0,,,2013-11-01 17:00,2013-11-12 10:47,admin,admin
359,84267,1296,11378,1423,1,0,N,N,N,CP_Phys,TT_Task,DT_FixedDUR2,RV_OK,TK_NotStart,BEW/ST/WB4/1350,Concreting for Pile Cap / Abutment Foundation,2511,3844.5,0,81,0,252,144,81,18,0,162,,,,2015-11-25 07:00,2015-12-07 17:00,,2014-03-11 14:30,2014-03-24 14:30,2014-03-11 14:30,2014-03-24 14:30,2014-03-11 14:30,2014-03-24 14:30,,2015-11-25 07:00,2015-12-07 17:00,,PT_Normal,,,,,bWFdtTT4UUyGrAcIsqTxxw,f2ddx1Gs6ke4TsDmy3602Q,,,N,0,0,,,2013-11-01 17:00,2013-11-11 16:19,admin,admin
360,84268,1296,11378,1423,1,0,N,N,N,CP_Phys,TT_Task,DT_FixedDUR2,RV_OK,TK_NotStart,BEW/ST/WB4/1630,Conceting including Formwork & Reinforcement fixing for Abutment,2511,3844.5,62,144,0,392,234,144,18,0,252,,,,2015-12-08 07:00,2015-12-30 17:00,,2014-03-24 14:30,2014-04-15 14:30,2014-03-24 14:30,2014-04-15 14:30,2014-03-24 14:30,2014-04-15 14:30,,2015-12-08 07:00,2015-12-30 17:00,,PT_Normal,,,,,lCY2sm5aHkis9w6j/8IwbA,2CikQXQ3sES3V0uXlzSrxQ,,,N,0,0,,,2013-11-01 17:00,2013-11-11 16:19,admin,admin
361,84269,1296,11378,1423,1,0,N,N,N,CP_Drtn,TT_Task,DT_FixedDUR2,RV_OK,TK_NotStart,BEW/ST/WB4/1040,Structural Excavation,2511,3844.5,0,40,0,240,54,36,27,0,26.5,,,,2015-11-09 13:00,2015-11-15 17:00,,2014-02-25 09:30,2014-03-03 14:30,2014-02-25 09:30,2014-03-03 14:30,2014-02-25 09:30,2014-03-03 09:30,,2015-11-09 13:00,2015-11-15 17:00,,PT_Normal,,,,,VO+vm9+cEk679vbEtbAeFg,NodYPGzVLEadibJIGBWQQA,,,N,0,0,,,2013-11-01 17:00,2013-11-11 16:19,admin,admin
362,84270,1296,11370,1423,1,0,N,N,N,CP_Phys,TT_Task,DT_FixedDUR2,RV_OK,TK_NotStart,BEW/ST/WB4/1050,PCC & Pile Head Breaking,2553,3902.5,0,54,0,64,72,54,0,0,0,,,,2015-11-19 07:00,2015-11-26 17:00,,2014-02-25 09:30,2014-03-05 09:30,2014-02-25 09:30,2014-03-05 09:30,2014-02-25 09:30,2014-03-05 09:30,,2015-11-19 07:00,2015-11-26 17:00,,PT_Normal,,,,,9wIIVjt60UiFnt6IcK6Yjw,ozUfGN7mUES3jM1OjfUBKw,,,N,0,0,,,2013-11-01 17:00,2013-11-12 10:47,admin,admin
363,84271,1296,11370,1423,1,0,N,N,N,CP_Phys,TT_Task,DT_FixedDUR2,RV_OK,TK_NotStart,BEW/ST/WB4/1210,Concreting for Pile Cap / Pier Foundation,2511,3902.5,0,81,0,252,144,81,18,0,162,,,,2015-11-29 07:00,2015-12-09 17:00,,2014-03-05 09:30,2014-03-18 09:30,2014-03-05 09:30,2014-03-18 09:30,2014-03-05 09:30,2014-03-18 09:30,,2015-11-29 07:00,2015-12-09 17:00,,PT_Normal,,,,,N8UM/MmL9kya/gqrGEOxKA,KkMT5N7UPU+M3lUXDuu6Sw,,,N,0,0,,,2013-11-01 17:00,2013-11-11 16:19,admin,admin
364,84272,1296,11370,1423,1,0,N,N,N,CP_Phys,TT_Task,DT_FixedDUR2,RV_OK,TK_NotStart,BEW/ST/WB4/1510,Conceting including Formwork & Reinforcement fixing for Pier,2511,3902.5,120,126,0,392,144,126,18,0,252,,,,2015-12-10 07:00,2015-12-30 17:00,,2014-03-18 09:30,2014-04-07 09:30,2014-03-18 09:30,2014-04-07 09:30,2014-03-18 09:30,2014-04-07 09:30,,2015-12-10 07:00,2015-12-30 17:00,,PT_Normal,,,,,ob3BCYmryEmgFq1C7Hu6Og,eFUzKtABq0Wk5qxWcSBCjw,,,N,0,0,,,2013-11-01 17:00,2013-11-11 16:19,admin,admin
365,84273,1296,11370,1423,1,0,N,N,N,CP_Drtn,TT_Task,DT_FixedDUR2,RV_OK,TK_NotStart,BEW/ST/WB4/1000,Structural Excavation,2511,3782.5,0,40,0,240,54,36,27,0,26.5,,,,2015-10-25 09:00,2015-10-29 14:00,,2014-02-18 15:30,2014-02-25 09:30,2014-02-18 15:30,2014-02-25 09:30,2014-02-18 15:30,2014-02-24 15:30,,2015-10-25 09:00,2015-10-29 14:00,,PT_Normal,,,,,xeffBEWQo0mjG+fozKeRAw,L61j3K4CDUyAbR2Ta8UyIQ,,,N,0,0,,,2013-11-01 17:00,2013-11-11 16:19,admin,admin
366,84274,1296,11371,1423,1,0,N,N,N,CP_Phys,TT_Task,DT_FixedDUR2,RV_OK,TK_NotStart,BEW/ST/WB4/1130,PCC & Pile Head Breaking,2553,3862.5,0,54,0,64,72,54,0,0,0,,,,2015-11-19 07:00,2015-11-26 17:00,,2014-03-03 14:30,2014-03-11 14:30,2014-03-03 14:30,2014-03-11 14:30,2014-03-03 14:30,2014-03-11 14:30,,2015-11-19 07:00,2015-11-26 17:00,,PT_Normal,,,,,pswKj54EuU6nBucwK9degw,o0Sgqrk2EkaVG2cw+Co4GQ,,,N,0,0,,,2013-11-01 17:00,2013-11-12 10:47,admin,admin
367,84275,1296,11371,1423,1,0,N,N,N,CP_Phys,TT_Task,DT_FixedDUR2,RV_OK,TK_NotStart,BEW/ST/WB4/1360,Concreting for Pile Cap / Pier Foundation,2511,3862.5,0,81,0,252,144,81,18,0,162,,,,2015-11-29 07:00,2015-12-09 17:00,,2014-03-11 14:30,2014-03-24 14:30,2014-03-11 14:30,2014-03-24 14:30,2014-03-11 14:30,2014-03-24 14:30,,2015-11-29 07:00,2015-12-09 17:00,,PT_Normal,,,,,rTUIiATjMkm64MV0XH3oBw,c2DVHW3FaUiUbQ9t7jJ7iQ,,,N,0,0,,,2013-11-01 17:00,2013-11-11 16:19,admin,admin
368,84276,1296,11371,1423,1,0,N,N,N,CP_Phys,TT_Task,DT_FixedDUR2,RV_OK,TK_NotStart,BEW/ST/WB4/1640,Conceting including Formwork & Reinforcement fixing for Pier,2511,3862.5,80,126,0,392,144,126,18,0,252,,,,2015-12-10 07:00,2015-12-30 17:00,,2014-03-24 14:30,2014-04-13 14:30,2014-03-24 14:30,2014-04-13 14:30,2014-03-24 14:30,2014-04-13 14:30,,2015-12-10 07:00,2015-12-30 17:00,,PT_Normal,,,,,ilt9zrq6YE2ekvBa8O0V4w,29kgGEmuhk2BN2/l63+1Hw,,,N,0,0,,,2013-11-01 17:00,2013-11-11 16:19,admin,admin
369,84277,1296,11371,1423,1,0,N,N,N,CP_Drtn,TT_Task,DT_FixedDUR2,RV_OK,TK_NotStart,BEW/ST/WB4/1060,Structural Excavation,2511,3782.5,0,40,0,240,54,36,27,0,26.5,,,,2015-10-29 14:00,2015-11-05 08:00,,2014-02-25 09:30,2014-03-03 14:30,2014-02-25 09:30,2014-03-03 14:30,2014-02-25 09:30,2014-03-03 09:30,,2015-10-29 14:00,2015-11-05 08:00,,PT_Normal,,,,,8NXyBUVh3U2I4vi7ACusVA,hPxdfsm4x0a42Dri0OFWIA,,,N,0,0,,,2013-11-01 17:00,2013-11-11 16:19,admin,admin
370,84278,1296,11372,1423,1,0,N,N,N,CP_Phys,TT_Task,DT_FixedDUR2,RV_OK,TK_NotStart,BEW/ST/WB4/1270,PCC & Pile Head Breaking,2553,3822.5,0,54,0,64,72,54,0,0,0,,,,2015-11-19 07:00,2015-11-26 17:00,,2014-03-10 08:30,2014-03-18 08:30,2014-03-10 08:30,2014-03-18 08:30,2014-03-10 08:30,2014-03-18 08:30,,2015-11-19 07:00,2015-11-26 17:00,,PT_Normal,,,,,+QxvZUqagE2b9kxz1FXbuw,8ZgA/zYG3UGQE5YDflmuNQ,,,N,0,0,,,2013-11-01 17:00,2013-11-12 10:47,admin,admin
371,84279,1296,11372,1423,1,0,N,N,N,CP_Phys,TT_Task,DT_FixedDUR2,RV_OK,TK_NotStart,BEW/ST/WB4/1470,Concreting for Pile Cap / Pier Foundation,2511,3822.5,0,81,0,252,144,81,18,0,162,,,,2015-11-29 07:00,2015-12-09 17:00,,2014-03-18 08:30,2014-03-31 08:30,2014-03-18 08:30,2014-03-31 08:30,2014-03-18 08:30,2014-03-31 08:30,,2015-11-29 07:00,2015-12-09 17:00,,PT_Normal,,,,,ndrnq13IBE2nqXmvprVKYQ,1TjH5vTBwUWg3qln7damdA,,,N,0,0,,,2013-11-01 17:00,2013-11-11 16:19,admin,admin
372,84280,1296,11372,1423,1,0,N,N,N,CP_Phys,TT_Task,DT_FixedDUR2,RV_OK,TK_NotStart,BEW/ST/WB4/1720,Conceting including Formwork & Reinforcement fixing for Pier,2511,3822.5,40,126,0,392,144,126,18,0,252,,,,2015-12-10 07:00,2015-12-30 17:00,,2014-03-31 08:30,2014-04-20 08:30,2014-03-31 08:30,2014-04-20 08:30,2014-03-31 08:30,2014-04-20 08:30,,2015-12-10 07:00,2015-12-30 17:00,,PT_Normal,,,,,4HWFGK/r+0GH8bGRaXBREw,wTiUlwpYFkaxhO2ebJAUrg,,,N,0,0,,,2013-11-01 17:00,2013-11-11 16:19,admin,admin
373,84281,1296,11372,1423,1,0,N,N,N,CP_Drtn,TT_Task,DT_FixedDUR2,RV_OK,TK_NotStart,BEW/ST/WB4/1140,Structural Excavation,2511,3782.5,0,40,0,240,54,36,27,0,26.5,,,,2015-11-05 08:00,2015-11-11 12:00,,2014-03-03 14:30,2014-03-10 08:30,2014-03-03 14:30,2014-03-10 08:30,2014-03-03 14:30,2014-03-09 14:30,,2015-11-05 08:00,2015-11-11 12:00,,PT_Normal,,,,,Ti2KI14ZVUGKBGKAsKLbCQ,0tSLve4/y0uuLpqLSQqC9w,,,N,0,0,,,2013-11-01 17:00,2013-11-11 16:19,admin,admin
374,84282,1296,11268,1423,1,0,N,N,N,CP_Phys,TT_Task,DT_FixedDUR2,RV_OK,TK_NotStart,BEW/ST/WB4/1070,PCC & Pile Head Breaking,2553,3884.5,0,54,0,64,72,54,0,0,0,,,,2015-11-16 07:00,2015-11-24 17:00,,2014-02-25 09:30,2014-03-05 09:30,2014-02-25 09:30,2014-03-05 09:30,2014-02-25 09:30,2014-03-05 09:30,,2015-11-16 07:00,2015-11-24 17:00,,PT_Normal,,,,,Esu5FMkTN0Wl7GDAzqeG+Q,PLZLIlnSrUiserZSFZcCFg,,,N,0,0,,,2013-11-01 17:00,2013-11-12 10:47,admin,admin
375,84283,1296,11268,1423,1,0,N,N,N,CP_Phys,TT_Task,DT_FixedDUR2,RV_OK,TK_NotStart,BEW/ST/WB4/1220,Concreting for Pile Cap / Abutment Foundation,2511,3884.5,0,81,0,252,144,81,18,0,162,,,,2015-11-25 07:00,2015-12-07 17:00,,2014-03-05 09:30,2014-03-18 09:30,2014-03-05 09:30,2014-03-18 09:30,2014-03-05 09:30,2014-03-18 09:30,,2015-11-25 07:00,2015-12-07 17:00,,PT_Normal,,,,,IGR+FiwFCUCeYPDEeE3l9A,Gp7bZm6IqEiIwZsE6X8a3g,,,N,0,0,,,2013-11-01 17:00,2013-11-11 16:19,admin,admin
376,84284,1296,11268,1423,1,0,N,N,N,CP_Phys,TT_Task,DT_FixedDUR2,RV_OK,TK_NotStart,BEW/ST/WB4/1520,Conceting including Formwork & Reinforcement fixing for Abutment,2511,3884.5,102,144,0,392,234,144,18,0,252,,,,2015-12-08 07:00,2015-12-30 17:00,,2014-03-18 09:30,2014-04-09 09:30,2014-03-18 09:30,2014-04-09 09:30,2014-03-18 09:30,2014-04-09 09:30,,2015-12-08 07:00,2015-12-30 17:00,,PT_Normal,,,,,tnerMrfsq0qOVAzso/pXIA,JmOtPc2k+EK0P2T3gPjhjg,,,N,0,0,,,2013-11-01 17:00,2013-11-11 16:19,admin,admin
377,84285,1296,11268,1423,1,0,N,N,N,CP_Drtn,TT_Task,DT_FixedDUR2,RV_OK,TK_NotStart,BEW/ST/WB4/1010,Structural Excavation,2511,3844.5,0,40,0,240,54,36,27,0,26.5,,,,2015-11-03 08:00,2015-11-09 12:00,,2014-02-18 15:30,2014-02-25 09:30,2014-02-18 15:30,2014-02-25 09:30,2014-02-18 15:30,2014-02-24 15:30,,2015-11-03 08:00,2015-11-09 12:00,,PT_Normal,,,,,jvqi0MVneE+1RpCf+GWpJA,9spLdGNPLkq9yljeO6pJrQ,,,N,0,0,,,2013-11-01 17:00,2013-11-11 16:19,admin,admin
378,84286,1296,11414,1423,1,0,N,N,N,CP_Phys,TT_Task,DT_FixedDUR2,RV_OK,TK_NotStart,BEW/ST/WB4/1400,PCC & Pile Head Breaking,2553,3782.5,0,54,0,64,72,54,0,0,0,,,,2015-11-19 07:00,2015-11-26 17:00,,2014-03-16 13:30,2014-03-24 13:30,2014-03-16 13:30,2014-03-24 13:30,2014-03-16 13:30,2014-03-24 13:30,,2015-11-19 07:00,2015-11-26 17:00,,PT_Normal,,,,,GN4x/ybTjUKOZA9+YEN4iA,g84Y3doxuEax9dfFGyGMtw,,,N,0,0,,,2013-11-01 17:00,2013-11-12 10:47,admin,admin
379,84287,1296,11414,1423,1,0,N,N,N,CP_Phys,TT_Task,DT_FixedDUR2,RV_OK,TK_NotStart,BEW/ST/WB4/1590,Concreting for Pile Cap / Pier Foundation,2511,3782.5,0,81,0,252,144,81,18,0,162,,,,2015-11-29 07:00,2015-12-09 17:00,,2014-03-24 13:30,2014-04-06 13:30,2014-03-24 13:30,2014-04-06 13:30,2014-03-24 13:30,2014-04-06 13:30,,2015-11-29 07:00,2015-12-09 17:00,,PT_Normal,,,,,uumeuA8NSUyR4NXnKhYb5A,vBTLzudOdUOVg+jULisLwA,,,N,0,0,,,2013-11-01 17:00,2013-11-11 16:19,admin,admin
380,84288,1296,11414,1423,1,0,N,N,N,CP_Phys,TT_Task,DT_FixedDUR2,RV_OK,TK_NotStart,BEW/ST/WB4/1770,Conceting including Formwork & Reinforcement fixing for Pier,2511,3782.5,0,126,0,392,144,126,18,0,252,,,,2015-12-10 07:00,2015-12-30 17:00,,2014-04-06 13:30,2014-04-24 13:30,2014-04-06 13:30,2014-04-24 13:30,2014-04-06 13:30,2014-04-24 13:30,,2015-12-10 07:00,2015-12-30 17:00,,PT_Normal,,,,,gbGJzyL89E+WLdjSuNrqhw,6/TTFg36FUCpexZHUUzC7w,,,N,0,0,,,2013-11-01 17:00,2013-11-11 16:19,admin,admin
381,84289,1296,11414,1423,1,0,N,N,N,CP_Drtn,TT_Task,DT_FixedDUR2,RV_OK,TK_NotStart,BEW/ST/WB4/1280,Structural Excavation,2511,3782.5,0,40,0,240,54,36,27,0,26.5,,,,2015-11-11 13:00,2015-11-17 17:00,,2014-03-10 08:30,2014-03-16 13:30,2014-03-10 08:30,2014-03-16 13:30,2014-03-10 08:30,2014-03-16 08:30,,2015-11-11 13:00,2015-11-17 17:00,,PT_Normal,,,,,OWgW2tBhW0ScssNazpjpVQ,g7c1SBGl8EePN1eoMWr/YQ,,,N,0,0,,,2013-11-01 17:00,2013-11-11 16:19,admin,admin
382,84290,1296,11415,1423,1,0,N,N,N,CP_Phys,TT_Task,DT_FixedDUR2,RV_OK,TK_NotStart,BEW/ST/WB4/1080,PCC & Pile Head Breaking,2553,4046.5,0,54,0,64,72,54,0,0,0,,,,2015-12-13 07:00,2015-12-20 17:00,,2014-02-25 09:30,2014-03-05 09:30,2014-02-25 09:30,2014-03-05 09:30,2014-02-25 09:30,2014-03-05 09:30,,2015-12-13 07:00,2015-12-20 17:00,,PT_Normal,,,,,Kw8HJOFXckizyTYi/wf9GA,BozeMZuI50CPCs0vynHMkA,,,N,0,0,,,2013-11-01 17:00,2013-11-12 10:47,admin,admin
383,84291,1296,11415,1423,1,0,N,N,N,CP_Phys,TT_Task,DT_FixedDUR2,RV_OK,TK_NotStart,BEW/ST/WB4/1230,Concreting for Pile Cap / Pier Foundation,2511,4046.5,0,81,0,252,144,81,18,0,162,,,,2015-12-21 07:00,2016-01-03 17:00,,2014-03-05 09:30,2014-03-18 09:30,2014-03-05 09:30,2014-03-18 09:30,2014-03-05 09:30,2014-03-18 09:30,,2015-12-21 07:00,2016-01-03 17:00,,PT_Normal,,,,,GD3uu76HPkGp2pONiQiWXA,EiCbftelzE62NEkx2AfO9Q,,,N,0,0,,,2013-11-01 17:00,2013-11-11 16:19,admin,admin
384,84292,1296,11415,1423,1,0,N,N,N,CP_Phys,TT_Task,DT_FixedDUR2,RV_OK,TK_NotStart,BEW/ST/WB4/1530,Conceting including Formwork & Reinforcement fixing for Pier,2511,4046.5,264,126,0,392,144,126,18,0,252,,,,2016-01-04 07:00,2016-01-21 17:00,,2014-03-18 09:30,2014-04-07 09:30,2014-03-18 09:30,2014-04-07 09:30,2014-03-18 09:30,2014-04-07 09:30,,2016-01-04 07:00,2016-01-21 17:00,,PT_Normal,,,,,zbbYQxzLkUOiEnSVz84uBg,QuItI2ywyUaZCkdB1LIbPQ,,,N,0,0,,,2013-11-01 17:00,2013-11-11 16:19,admin,admin
385,84293,1296,11415,1423,1,0,N,N,N,CP_Drtn,TT_Task,DT_FixedDUR2,RV_OK,TK_NotStart,BEW/ST/WB4/1020,Structural Excavation,2511,3966.5,0,40,0,240,54,36,27,0,26.5,,,,2015-11-23 14:00,2015-11-30 08:00,,2014-02-18 15:30,2014-02-25 09:30,2014-02-18 15:30,2014-02-25 09:30,2014-02-18 15:30,2014-02-24 15:30,,2015-11-23 14:00,2015-11-30 08:00,,PT_Normal,,,,,ufcs+9ExD0eYIC4w6DKxrw,KBnTtQ4QjUmH8oFxgmkS4w,,,N,0,0,,,2013-11-01 17:00,2013-11-11 16:19,admin,admin
386,84294,1296,11348,1423,1,0,N,N,N,CP_Phys,TT_Task,DT_FixedDUR2,RV_OK,TK_NotStart,BEW/ST/WB4/1150,PCC & Pile Head Breaking,2553,4006.5,0,54,0,64,72,54,0,0,0,,,,2015-12-13 07:00,2015-12-20 17:00,,2014-03-03 14:30,2014-03-11 14:30,2014-03-03 14:30,2014-03-11 14:30,2014-03-03 14:30,2014-03-11 14:30,,2015-12-13 07:00,2015-12-20 17:00,,PT_Normal,,,,,cY2fR9sxZkqZA+9tF5ogXw,xbsVoF1SVUy3WcfouYq1+Q,,,N,0,0,,,2013-11-01 17:00,2013-11-12 10:47,admin,admin
387,84295,1296,11348,1423,1,0,N,N,N,CP_Phys,TT_Task,DT_FixedDUR2,RV_OK,TK_NotStart,BEW/ST/WB4/1370,Concreting for Pile Cap / Pier Foundation,2511,4006.5,0,81,0,252,144,81,18,0,162,,,,2015-12-21 07:00,2016-01-03 17:00,,2014-03-11 14:30,2014-03-24 14:30,2014-03-11 14:30,2014-03-24 14:30,2014-03-11 14:30,2014-03-24 14:30,,2015-12-21 07:00,2016-01-03 17:00,,PT_Normal,,,,,Mx1bbtHYYkKAI8wJiXVoSA,GOQstMBmEUyzLrrBH7MWfQ,,,N,0,0,,,2013-11-01 17:00,2013-11-11 16:19,admin,admin
388,84296,1296,11348,1423,1,0,N,N,N,CP_Phys,TT_Task,DT_FixedDUR2,RV_OK,TK_NotStart,BEW/ST/WB4/1650,Conceting including Formwork & Reinforcement fixing for Pier,2511,4006.5,224,126,0,392,144,126,18,0,252,,,,2016-01-04 07:00,2016-01-21 17:00,,2014-03-24 14:30,2014-04-13 14:30,2014-03-24 14:30,2014-04-13 14:30,2014-03-24 14:30,2014-04-13 14:30,,2016-01-04 07:00,2016-01-21 17:00,,PT_Normal,,,,,6Bli/MM0ZUCxI91H6fK/qg,IDr1xEdk4keAb8oEzMiiEw,,,N,0,0,,,2013-11-01 17:00,2013-11-11 16:19,admin,admin
389,84297,1296,11348,1423,1,0,N,N,N,CP_Drtn,TT_Task,DT_FixedDUR2,RV_OK,TK_NotStart,BEW/ST/WB4/1090,Structural Excavation,2511,3966.5,0,40,0,240,54,36,27,0,26.5,,,,2015-11-30 08:00,2015-12-06 12:00,,2014-02-25 09:30,2014-03-03 14:30,2014-02-25 09:30,2014-03-03 14:30,2014-02-25 09:30,2014-03-03 09:30,,2015-11-30 08:00,2015-12-06 12:00,,PT_Normal,,,,,AAFZSjCQXUqn2mKzVW3+lA,+2FvGmr+Ike41rZjtZpfjg,,,N,0,0,,,2013-11-01 17:00,2013-11-11 16:19,admin,admin
390,84298,1296,11286,1423,1,0,N,N,N,CP_Phys,TT_Task,DT_FixedDUR2,RV_OK,TK_NotStart,BEW/ST/WB4/1290,PCC & Pile Head Breaking,2553,3966.5,0,54,0,64,72,54,0,0,0,,,,2015-12-13 07:00,2015-12-20 17:00,,2014-03-10 08:30,2014-03-18 08:30,2014-03-10 08:30,2014-03-18 08:30,2014-03-10 08:30,2014-03-18 08:30,,2015-12-13 07:00,2015-12-20 17:00,,PT_Normal,,,,,Q8KfM/FDu0686+NOtL+LhA,rJakPBkx/EuIz8NYavvYlw,,,N,0,0,,,2013-11-01 17:00,2013-11-12 10:47,admin,admin
391,84299,1296,11286,1423,1,0,N,N,N,CP_Phys,TT_Task,DT_FixedDUR2,RV_OK,TK_NotStart,BEW/ST/WB4/1480,Concreting for Pile Cap / Pier Foundation,2511,3966.5,0,81,0,252,144,81,18,0,162,,,,2015-12-21 07:00,2016-01-03 17:00,,2014-03-18 08:30,2014-03-31 08:30,2014-03-18 08:30,2014-03-31 08:30,2014-03-18 08:30,2014-03-31 08:30,,2015-12-21 07:00,2016-01-03 17:00,,PT_Normal,,,,,mSnyrvIgsEOVi9aVkm21vg,vTXnA3UC70eaGjAqraLD5Q,,,N,0,0,,,2013-11-01 17:00,2013-11-11 16:19,admin,admin
392,84300,1296,11286,1423,1,0,N,N,N,CP_Phys,TT_Task,DT_FixedDUR2,RV_OK,TK_NotStart,BEW/ST/WB4/1730,Conceting including Formwork & Reinforcement fixing for Pier,2511,3966.5,184,126,0,392,144,126,18,0,252,,,,2016-01-04 07:00,2016-01-21 17:00,,2014-03-31 08:30,2014-04-20 08:30,2014-03-31 08:30,2014-04-20 08:30,2014-03-31 08:30,2014-04-20 08:30,,2016-01-04 07:00,2016-01-21 17:00,,PT_Normal,,,,,c/Nqt5zZwEmlfTxiSTgxMA,WbMpgsbdJUCoxXF0GvvFvw,,,N,0,0,,,2013-11-01 17:00,2013-11-11 16:19,admin,admin
393,84301,1296,11286,1423,1,0,N,N,N,CP_Drtn,TT_Task,DT_FixedDUR2,RV_OK,TK_NotStart,BEW/ST/WB4/1160,Structural Excavation,2511,3966.5,0,40,0,240,54,36,27,0,26.5,,,,2015-12-06 13:00,2015-12-10 17:00,,2014-03-03 14:30,2014-03-10 08:30,2014-03-03 14:30,2014-03-10 08:30,2014-03-03 14:30,2014-03-09 14:30,,2015-12-06 13:00,2015-12-10 17:00,,PT_Normal,,,,,+8HowZd700CG/7Yu1AlPvg,UAB5fLYy30mFsqBFCXXJhw,,,N,0,0,,,2013-11-01 17:00,2013-11-11 16:19,admin,admin
394,84302,1296,11420,1423,1,0,N,N,N,CP_Drtn,TT_Task,DT_FixedDUR2,RV_OK,TK_NotStart,BEW/ST/WB4/2080,Placing of I - Girders on temp Support Span 5-8,2511,3782.5,0,144,0,288,144,144,18,0,144,,,,2016-01-24 07:00,2016-02-14 17:00,,2014-05-18 13:30,2014-06-10 13:30,2014-05-18 13:30,2014-06-10 13:30,2014-05-18 13:30,2014-06-10 13:30,,2016-01-24 07:00,2016-02-14 17:00,,PT_Normal,,,,,9EXV68WJM06YY5e0Q5jlCg,ru7PH/tymUOv4GiQdQ8QXg,,,N,0,0,,,2013-11-01 17:00,2013-11-11 16:19,admin,admin
395,84303,1296,11420,1423,1,0,N,N,N,CP_Drtn,TT_Task,DT_FixedDUR2,RV_OK,TK_NotStart,BEW/ST/WB4/2120,Pre-Cast Slab Placing Span 5-8 & Diaphram Wall,2553,3782.5,0,144,0,576,180,144,9,0,144,,,,2016-02-15 07:00,2016-03-07 17:00,,2014-06-10 13:30,2014-07-02 13:30,2014-06-10 13:30,2014-07-02 13:30,2014-06-10 13:30,2014-07-02 13:30,,2016-02-15 07:00,2016-03-07 17:00,,PT_Normal,,,,,CyElKdyTSUCOaxLxYS9wLQ,DXO1GQihX0eMSsiBbSD6xw,,,N,0,0,,,2013-11-01 17:00,2013-11-11 16:19,admin,admin
396,84304,1296,11420,1423,1,0,N,N,N,CP_Drtn,TT_Task,DT_FixedDUR2,RV_OK,TK_NotStart,BEW/ST/WB4/2140,"Span 5-8, Slab Casting including Staging, Shuttering & Rienforcement fixing and bearing",2553,3782.5,0,180,0,720,288,180,9,0,180,,,,2016-03-08 07:00,2016-04-04 17:00,,2014-07-02 13:30,2014-08-06 13:30,2014-07-02 13:30,2014-08-06 13:30,2014-07-02 13:30,2014-08-06 13:30,,2016-03-08 07:00,2016-04-04 17:00,,PT_Normal,,,,,TVR3xpeErkSgB6ctEmf5/A,5GfSQb5jKE2YeA1qstctOw,,,N,0,0,,,2013-11-01 17:00,2013-11-11 16:19,admin,admin
397,84305,1296,11301,1423,1,0,N,N,N,CP_Phys,TT_Task,DT_FixedDUR2,RV_OK,TK_NotStart,BEW/ST/WB4/2000,Bed Preparation and priliminary activities,,3951.5,0,216,0,0,0,216,0,0,0,,,,2015-08-24 07:00,2015-09-24 17:00,,2013-11-20 15:30,2013-12-24 15:30,2013-11-20 15:30,2013-12-24 15:30,2013-11-20 15:30,2013-12-24 15:30,,2015-08-24 07:00,2015-09-24 17:00,,PT_Normal,,,,,FsWDRE84pEGY6la67+UG8A,MF01+hXzQkOnH+AoELIGUw,,,N,0,0,,,2013-11-01 17:00,2013-11-11 16:56,admin,admin
398,84306,1296,11301,1423,1,0,N,N,N,CP_Phys,TT_Task,DT_FixedDUR2,RV_OK,TK_NotStart,BEW/ST/WB4/2020,"Span 1-3 Casting of I-Girders including Threading, Placing Anchor Blocks & Stressing from Both Sides",2553,3951.5,0,189,0,864,270,189,45,0,648,,,,2015-09-27 07:00,2015-10-26 17:00,,2013-12-24 15:30,2014-01-26 15:30,2013-12-24 15:30,2014-01-26 15:30,2013-12-24 15:30,2014-01-26 15:30,,2015-09-27 07:00,2015-10-26 17:00,,PT_Normal,,,,,DG8UBW0vQ0mB4DR8A0cYrg,2pcguZ0h1kiCFQ2ZiL1ASA,,,N,0,0,,,2013-11-01 17:00,2013-11-11 16:56,admin,admin
399,84307,1296,11301,1423,1,0,N,N,N,CP_Phys,TT_Task,DT_FixedDUR2,RV_OK,TK_NotStart,BEW/ST/WB4/2010,Span 1-4 Casting of Precast Slabs,,5184.5,0,216,0,648,54,216,0,0,0,,,,2016-04-10 07:00,2016-05-12 17:00,,2013-12-24 15:30,2014-01-29 15:30,2013-12-24 15:30,2014-01-29 15:30,2013-12-24 15:30,2014-01-29 15:30,,2016-04-10 07:00,2016-05-12 17:00,,PT_Normal,,,,,bHFMriIMv0Swq9waVgtq1A,KCBF03imH0KJwJfMxqJ87Q,,,N,0,0,,,2013-11-01 17:00,2013-11-11 16:56,admin,admin
400,84308,1296,11301,1423,1,0,N,N,N,CP_Phys,TT_Task,DT_FixedDUR2,RV_OK,TK_NotStart,BEW/ST/WB4/2040,"Span 4-6 Casting of I-Girders including Threading, Placing Anchor Blocks & Stressing from Both Sides",2553,3951.5,0,216,0,864,270,216,45,0,648,,,,2015-10-27 07:00,2015-11-30 17:00,,2014-01-26 15:30,2014-02-27 15:30,2014-01-26 15:30,2014-02-27 15:30,2014-01-26 15:30,2014-02-27 15:30,,2015-10-27 07:00,2015-11-30 17:00,,PT_Normal,,,,,HyIM2elhmkqUhWbUXCHl8g,qpTkNsUvgkuyllTYVvkBIw,,,N,0,0,,,2013-11-01 17:00,2013-11-11 16:56,admin,admin
401,84309,1296,11301,1423,1,0,N,N,N,CP_Phys,TT_Task,DT_FixedDUR2,RV_OK,TK_NotStart,BEW/ST/WB4/2050,Span 5-8 Casting of Precast Slabs,,5184.5,81,216,0,648,54,216,0,0,0,,,,2016-05-15 07:00,2016-06-15 17:00,,2014-01-29 15:30,2014-03-04 15:30,2014-01-29 15:30,2014-03-04 15:30,2014-01-29 15:30,2014-03-04 15:30,,2016-05-15 07:00,2016-06-15 17:00,,PT_Normal,,,,,W8G2D4vBvk6LH0Jgm6Tz6A,WhbE3VQxoE+utA6Q3LQmLQ,,,N,0,0,,,2013-11-01 17:00,2013-11-11 16:56,admin,admin
402,84310,1296,11301,1423,1,0,N,N,N,CP_Phys,TT_Task,DT_FixedDUR2,RV_OK,TK_NotStart,BEW/ST/WB4/2090,"Span 7- 8 Casting of I-Girders including Threading, Placing Anchor Blocks & Stressing from Both Sides",2553,3951.5,0,126,0,864,270,126,45,0,648,,,,2015-12-01 07:00,2015-12-20 17:00,,2014-02-27 15:30,2014-03-19 15:30,2014-02-27 15:30,2014-03-19 15:30,2014-02-27 15:30,2014-03-19 15:30,,2015-12-01 07:00,2015-12-20 17:00,,PT_Normal,,,,,27TGpBy0xE6Gbz9nTUr1Jw,R0LYOF8JX0q6Ya7UzzyZ1Q,,,N,0,0,,,2013-11-01 17:00,2013-11-11 16:56,admin,admin
403,84311,1296,11402,1423,1,0,N,N,N,CP_Phys,TT_Task,DT_FixedDUR2,RV_OK,TK_NotStart,BEW/ST/WB4/1170,Excavation for Retaining Wall A1 Side,2553,3876.5,0,36,0,54,45,36,9,0,36,,,,2015-11-22 13:00,2015-11-26 12:00,,2014-03-03 14:30,2014-03-09 14:30,2014-03-03 14:30,2014-03-09 14:30,2014-03-03 14:30,2014-03-09 14:30,,2015-11-22 13:00,2015-11-26 12:00,,PT_Normal,,,,,OzPbn46I/UK5f1juKoNarg,t5+0GUMBB0W4b8Aco9k0VQ,,,N,0,0,,,2013-11-01 17:00,2013-11-11 16:19,admin,admin
404,84312,1296,11402,1423,1,0,N,N,N,CP_Phys,TT_Task,DT_FixedDUR2,RV_OK,TK_NotStart,BEW/ST/WB4/1250,Foundation for Retaining Wall A1 Side,2553,4132.5,0,108,0,432,180,108,18,0,216,,,,2016-01-07 07:00,2016-01-24 17:00,,2014-03-09 14:30,2014-03-25 14:30,2014-03-09 14:30,2014-03-25 14:30,2014-03-09 14:30,2014-03-25 14:30,,2016-01-07 07:00,2016-01-24 17:00,,PT_Normal,,,,,NwEnZo2xV0SpdpLoJUv5fw,Gh8rYcyblUeocaaGtLbzWg,,,N,0,0,,,2013-11-01 17:00,2013-11-11 16:19,admin,admin
405,84313,1296,11402,1423,1,0,N,N,N,CP_Phys,TT_Task,DT_FixedDUR2,RV_OK,TK_NotStart,BEW/ST/WB4/1670,Wall instalation of A1 Side,2553,4132.5,0,216,0,648,126,216,18,0,24,,,,2016-01-25 07:00,2016-02-25 17:00,,2014-03-25 14:30,2014-04-28 14:30,2014-03-25 14:30,2014-04-28 14:30,2014-03-25 14:30,2014-04-28 14:30,,2016-01-25 07:00,2016-02-25 17:00,,PT_Normal,,,,,JTzfHL/p0EaqnMt6gaW54Q,LjtXZUvE7kKY1w/Ca/oqjQ,,,N,0,0,,,2013-11-01 17:00,2013-11-11 16:19,admin,admin
406,84314,1296,11402,1423,1,0,N,N,N,CP_Phys,TT_Task,DT_FixedDUR2,RV_OK,TK_NotStart,BEW/ST/WB4/1680,Earth filling & Embankment Preparation A1 Side,2553,4132.5,0,189,0,378,90,189,72,0,756,,,,2016-01-25 07:00,2016-02-22 17:00,,2014-03-25 14:30,2014-04-23 14:30,2014-03-25 14:30,2014-04-23 14:30,2014-03-25 14:30,2014-04-23 14:30,,2016-01-25 07:00,2016-02-22 17:00,,PT_Normal,,,,,PXJOv+NJGkOuC7wLxtVPlw,+X6Aazi2vU2wJTFVCS1/5g,,,N,0,0,,,2013-11-01 17:00,2013-11-12 09:52,admin,admin
407,84315,1296,11402,1423,1,0,N,N,N,CP_Phys,TT_Task,DT_FixedDUR2,RV_OK,TK_NotStart,BEW/ST/WB4/1860,Granular Sub-Base A1 Side,2553,4132.5,0,135,0,270,72,135,63,0,180,,,,2016-02-23 07:00,2016-03-14 17:00,,2014-04-23 14:30,2014-05-14 14:30,2014-04-23 14:30,2014-05-14 14:30,2014-04-23 14:30,2014-05-14 14:30,,2016-02-23 07:00,2016-03-14 17:00,,PT_Normal,,,,,QgyIH2UY0k6w7MSIeffdFQ,+g/V6s9kbEyPM+hDidDDCQ,,,N,0,0,,,2013-11-01 17:00,2013-11-11 23:01,admin,admin
408,84316,1296,11402,1423,1,0,N,N,N,CP_Phys,TT_Task,DT_FixedDUR2,RV_OK,TK_NotStart,BEW/ST/WB4/1960,Aggregate Base Course,2553,3876.5,0,90,0,180,90,90,74,0,110,,,,2016-03-28 07:00,2016-04-10 17:00,,2014-07-08 08:30,2014-07-22 08:30,2014-07-08 08:30,2014-07-22 08:30,2014-07-08 08:30,2014-07-22 08:30,,2016-03-28 07:00,2016-04-10 17:00,,PT_Normal,,,,,Ms7HHn7uUkipSquQAVkYWw,wEWm/xk1X0W9nmrZyn2BrQ,,,N,0,0,,,2013-11-01 17:00,2013-11-12 09:57,admin,admin
409,84317,1296,11402,1423,1,0,N,N,N,CP_Phys,TT_Task,DT_FixedDUR2,RV_OK,TK_NotStart,BEW/ST/WB4/1980,Crash Barrier & Median Works,2553,3876.5,94,180,0,720,162,180,18,0,360,,,,2016-04-11 07:00,2016-05-09 17:00,,2014-07-22 08:30,2014-08-26 08:30,2014-07-22 08:30,2014-08-26 08:30,2014-07-22 08:30,2014-08-26 08:30,,2016-04-11 07:00,2016-05-09 17:00,,PT_Normal,,,,,e6o364CToUCaD8CsKlMohw,aSrzkteR00Stv+9JR3+GOw,,,N,0,0,,,2013-11-01 17:00,2013-11-11 16:19,admin,admin
410,84318,1296,11402,1423,1,0,N,N,N,CP_Phys,TT_Task,DT_FixedDUR2,RV_OK,TK_NotStart,BEW/ST/WB4/2200,Bituminous Base Course Including IC,2553,3818.5,0,90,0,180,90,90,76,0,60,,,,2016-04-11 07:00,2016-04-24 17:00,,2014-08-06 13:30,2014-08-20 13:30,2014-08-06 13:30,2014-08-20 13:30,2014-08-06 13:30,2014-08-20 13:30,,2016-04-11 07:00,2016-04-24 17:00,,PT_Normal,,,,,AIfdFzTdS0eJxouvrAZZPg,OxBpNAPnHEWlmLIm6HJp+Q,,,N,0,0,,,2013-11-01 17:00,2013-11-12 10:02,admin,admin
411,84319,1296,11402,1423,1,0,N,N,N,CP_Phys,TT_Task,DT_FixedDUR2,RV_OK,TK_NotStart,BEW/ST/WB4/2210,Bituminous Wearing Course,2553,3818.5,36,90,0,180,90,90,78,0,70,,,,2016-04-25 07:00,2016-05-09 17:00,,2014-08-20 13:30,2014-09-03 13:30,2014-08-20 13:30,2014-09-03 13:30,2014-08-20 13:30,2014-09-03 13:30,,2016-04-25 07:00,2016-05-09 17:00,,PT_Normal,,,,,x5BsI2Nxu0y92RD24ZFLcQ,cSgWrsd/f02gMf8avh8k9g,,,N,0,0,,,2013-11-01 17:00,2013-11-11 22:51,admin,admin
412,84320,1296,11402,1423,1,0,N,N,N,CP_Phys,TT_Task,DT_FixedDUR2,RV_OK,TK_NotStart,BEW/ST/WB4/2250,Miscellaneous Works,2553,3782.5,0,180,0,180,180,180,0,0,0,,,,2016-05-10 07:00,2016-06-06 17:00,,2014-09-09 13:30,2014-10-09 14:30,2014-09-09 13:30,2014-10-09 14:30,2014-09-09 13:30,2014-10-09 14:30,,2016-05-10 07:00,2016-06-06 17:00,,PT_Normal,,,,,FC7GahmcGE+CKCAUjk/QuQ,KYFis9amCUu3uEsRoQq1KQ,,,N,0,0,,,2013-11-01 17:00,2013-11-11 16:19,admin,admin
413,84321,1296,11402,1423,1,0,N,N,N,CP_Drtn,TT_Task,DT_FixedDUR2,RV_OK,TK_NotStart,BEW/ST/WB4/1260,Excavation for Retaining Wall A2 Side,2553,3876.5,0,40,0,80,49,40,9,0,40,,,,2015-11-26 13:00,2015-12-02 17:00,,2014-03-09 14:30,2014-03-16 08:30,2014-03-09 14:30,2014-03-16 08:30,2014-03-09 14:30,2014-03-16 08:30,,2015-11-26 13:00,2015-12-02 17:00,,PT_Normal,,,,,0f/E2h4inU6Z1dXXImS0og,bf2pymTlPUqTbB5dl+JbtQ,,,N,0,0,,,2013-11-01 17:00,2013-11-11 16:19,admin,admin
414,84322,1296,11402,1423,1,0,N,N,N,CP_Drtn,TT_Task,DT_FixedDUR2,RV_OK,TK_NotStart,BEW/ST/WB4/1390,Foundation for Retaining Wall A2 Side,2553,3876.5,0,108,0,432,180,108,18,0,216,,,,2015-12-03 07:00,2015-12-20 17:00,,2014-03-16 08:30,2014-04-01 08:30,2014-03-16 08:30,2014-04-01 08:30,2014-03-16 08:30,2014-04-01 08:30,,2015-12-03 07:00,2015-12-20 17:00,,PT_Normal,,,,,DszDLGyO3EG3NY0pyzpeYA,13RsfxHnrUOnrUwzx0+LBw,,,N,0,0,,,2013-11-01 17:00,2013-11-11 16:19,admin,admin
415,84323,1296,11402,1423,1,0,N,N,N,CP_Drtn,TT_Task,DT_FixedDUR2,RV_OK,TK_NotStart,BEW/ST/WB4/1760,Wall instalation of A2 Side,2553,3876.5,0,216,0,648,126,216,18,0,216,,,,2015-12-21 07:00,2016-01-24 17:00,,2014-04-01 08:30,2014-05-05 08:30,2014-04-01 08:30,2014-05-05 08:30,2014-04-01 08:30,2014-05-05 08:30,,2015-12-21 07:00,2016-01-24 17:00,,PT_Normal,,,,,mL8KSxxEPEGV2Icn/NR3wA,uGX9bdnLtkOQvSM5YeimMA,,,N,0,0,,,2013-11-01 17:00,2013-11-11 16:19,admin,admin
416,84324,1296,11402,1423,1,0,N,N,N,CP_Drtn,TT_Task,DT_FixedDUR2,RV_OK,TK_NotStart,BEW/ST/WB4/1870,Earth filling & Embankment Preparation A2 Side,2553,3876.5,0,189,0,378,90,189,72,0,756,,,,2016-01-25 07:00,2016-02-22 17:00,,2014-05-05 08:30,2014-06-04 08:30,2014-05-05 08:30,2014-06-04 08:30,2014-05-05 08:30,2014-06-04 08:30,,2016-01-25 07:00,2016-02-22 17:00,,PT_Normal,,,,,HHiiKCXsiUKneQQjXN/quA,qTgyVmaXmU+cBUJo/wZeYQ,,,N,0,0,,,2013-11-01 17:00,2013-11-12 09:52,admin,admin
417,84325,1296,11402,1423,1,0,N,N,N,CP_Drtn,TT_Task,DT_FixedDUR2,RV_OK,TK_NotStart,BEW/ST/WB4/1920,Granular Sub-Base A2 Side,2553,3876.5,0,135,0,270,72,135,63,0,540,,,,2016-02-23 07:00,2016-03-14 17:00,,2014-06-04 08:30,2014-06-25 08:30,2014-06-04 08:30,2014-06-25 08:30,2014-06-04 08:30,2014-06-25 08:30,,2016-02-23 07:00,2016-03-14 17:00,,PT_Normal,,,,,O8XTg4CpQkuwNEaBaLUEMg,CoMPULS9h0uGj57K+Fg4kg,,,N,0,0,,,2013-11-01 17:00,2013-11-11 23:01,admin,admin
418,84326,1296,11402,1423,1,0,N,N,N,CP_Drtn,TT_Task,DT_FixedDUR2,RV_OK,TK_NotStart,BEW/ST/WB4/1890,Concreting of Approch Slab A1 Side,2553,4132.5,256,81,0,324,90,81,9,0,81,,,,2016-03-15 07:00,2016-03-27 17:00,,2014-05-14 14:30,2014-05-28 14:30,2014-05-14 14:30,2014-05-28 14:30,2014-05-14 14:30,2014-05-28 14:30,,2016-03-15 07:00,2016-03-27 17:00,,PT_Normal,,,,,6FozISX1J06U/z4i8DMwAA,2h39B0/uqUSEPDLoNmJ33Q,,,N,0,0,,,2013-11-01 17:00,2013-11-11 16:19,admin,admin
419,84327,1296,11402,1423,1,0,N,N,N,CP_Drtn,TT_Task,DT_FixedDUR2,RV_OK,TK_NotStart,BEW/ST/WB4/1940,Concreting of Approch Slab A2 Side,2553,3876.5,0,81,0,324,90,81,9,0,81,,,,2016-03-15 07:00,2016-03-27 17:00,,2014-06-25 08:30,2014-07-08 08:30,2014-06-25 08:30,2014-07-08 08:30,2014-06-25 08:30,2014-07-08 08:30,,2016-03-15 07:00,2016-03-27 17:00,,PT_Normal,,,,,l5Mftdh4r0CDOKsTP8lmZw,TyPQ0s5nCUyCkkLz2YiOpQ,,,N,0,0,,,2013-11-01 17:00,2013-11-11 16:19,admin,admin
420,84328,1296,11418,1423,1,0,N,N,N,CP_Phys,TT_Task,DT_FixedDUR2,RV_OK,TK_NotStart,BEW/ST/WB4/2160,Placing of I - Girders on temp Support Span 1 - 4,2511,3944.5,0,144,0,195.999999,144,144,18,0,51.999999,,,,2016-01-28 07:00,2016-02-18 17:00,,2014-04-28 13:30,2014-05-20 13:30,2014-04-28 13:30,2014-05-20 13:30,2014-04-28 13:30,2014-05-20 13:30,,2016-01-28 07:00,2016-02-18 17:00,,PT_Normal,,,,,bRoRFFZlDk6dtks22rSayg,WVCzOXWMCkCrNwrGgZXN+w,,,N,0,0,,,2013-11-01 17:00,2013-11-11 16:19,admin,admin
421,84329,1296,11418,1423,1,0,N,N,N,CP_Phys,TT_Task,DT_FixedDUR2,RV_OK,TK_NotStart,BEW/ST/WB4/2180,Pre-Cast Slab Placing Span 1-4 & Diaphram Wall,2511,4007.5,0,144,0,483.999999,180,144,9,0,9,,,,2016-02-15 07:00,2016-03-07 17:00,,2014-05-05 13:30,2014-05-28 13:30,2014-05-05 13:30,2014-05-28 13:30,2014-05-05 13:30,2014-05-28 13:30,,2016-02-15 07:00,2016-03-07 17:00,,PT_Normal,,,,,BG0E0U5Nu0+3F7J5II/uMQ,BGdFkiergEOIzNKezZmFIA,,,N,0,0,,,2013-11-01 17:00,2013-11-11 16:19,admin,admin
422,84330,1296,11418,1423,1,0,N,N,N,CP_Phys,TT_Task,DT_FixedDUR2,RV_OK,TK_NotStart,BEW/ST/WB4/2220,"Span 1-4, Slab Casting including Staging, Shuttering & Rienforcement fixing and bearing",2511,4007.5,63,180,0,604.999999,288,180,9,0,64.999999,,,,2016-03-08 07:00,2016-04-04 17:00,,2014-05-28 13:30,2014-06-25 13:30,2014-05-28 13:30,2014-06-25 13:30,2014-05-28 13:30,2014-06-25 13:30,,2016-03-08 07:00,2016-04-04 17:00,,PT_Normal,,,,,fCe78OkqIEyjhcSxPfZ9fQ,k5dbkNBZUUaEtR5RDeEGBA,,,N,0,0,,,2013-11-01 17:00,2013-11-11 16:19,admin,admin
423,84331,1296,11418,1423,1,0,N,N,N,CP_Phys,TT_Task,DT_FixedDUR2,RV_OK,TK_NotStart,BEW/ST/WB4/2280,Casting of Concrete Bridge Parapet,2511,3944.5,162,216,0,679,162,216,9,0,216,,,,2016-05-04 07:00,2016-06-06 17:00,,2014-08-10 13:30,2014-09-11 13:30,2014-08-10 13:30,2014-09-11 13:30,2014-08-10 13:30,2014-09-11 13:30,,2016-05-04 07:00,2016-06-06 17:00,,PT_Normal,,,,,yRJ9kDim40iumBoFdfoPlQ,NCP95ndPZEyTJbwcVNRA6Q,,,N,0,0,,,2013-11-01 17:00,2013-11-11 22:57,admin,admin
424,84332,1296,11391,1423,1,0,N,N,N,CP_Phys,TT_Task,DT_FixedDUR2,RV_OK,TK_NotStart,BEW/ST/WB4/1410,PCC & Pile Head Breaking,2553,3944.5,0,54,0,64,72,54,0,0,0,,,,2015-12-15 07:00,2015-12-22 17:00,,2014-03-16 13:30,2014-03-24 13:30,2014-03-16 13:30,2014-03-24 13:30,2014-03-16 13:30,2014-03-24 13:30,,2015-12-15 07:00,2015-12-22 17:00,,PT_Normal,,,,,9mBzFXegGk+dlgg2b9Y/0Q,+TE403ZpwkqRD2Xo4rlg3A,,,N,0,0,,,2013-11-01 17:00,2013-11-12 10:47,admin,admin
425,84333,1296,11391,1423,1,0,N,N,N,CP_Phys,TT_Task,DT_FixedDUR2,RV_OK,TK_NotStart,BEW/ST/WB4/1600,Concreting for Pile Cap / Abutment Foundation,2511,3944.5,0,81,0,252,144,81,18,0,162,,,,2015-12-24 07:00,2016-01-05 17:00,,2014-03-24 13:30,2014-04-06 13:30,2014-03-24 13:30,2014-04-06 13:30,2014-03-24 13:30,2014-04-06 13:30,,2015-12-24 07:00,2016-01-05 17:00,,PT_Normal,,,,,NShPOD7Gk06Ju+P61uhYzg,D7fPTqPYOEWZY2fw1PtTOg,,,N,0,0,,,2013-11-01 17:00,2013-11-11 16:19,admin,admin
426,84334,1296,11391,1423,1,0,N,N,N,CP_Phys,TT_Task,DT_FixedDUR2,RV_OK,TK_NotStart,BEW/ST/WB4/1780,Conceting including Formwork & Reinforcement fixing for Abutment,2511,3944.5,0,144,0,392,234,144,18,0,252,,,,2016-01-06 07:00,2016-01-27 17:00,,2014-04-06 13:30,2014-04-28 13:30,2014-04-06 13:30,2014-04-28 13:30,2014-04-06 13:30,2014-04-28 13:30,,2016-01-06 07:00,2016-01-27 17:00,,PT_Normal,,,,,K4vuFiMz+U2TOxnJgfomBQ,oS5rEPG/mku2hDdeXYoYuA,,,N,0,0,,,2013-11-01 17:00,2013-11-11 16:19,admin,admin
427,84335,1296,11391,1423,1,0,N,N,N,CP_Drtn,TT_Task,DT_FixedDUR2,RV_OK,TK_NotStart,BEW/ST/WB4/1300,Structural Excavation,2511,3944.5,0,40,0,240,54,36,27,0,26.5,,,,2015-12-08 13:00,2015-12-14 17:00,,2014-03-10 08:30,2014-03-16 13:30,2014-03-10 08:30,2014-03-16 13:30,2014-03-10 08:30,2014-03-16 08:30,,2015-12-08 13:00,2015-12-14 17:00,,PT_Normal,,,,,y7iVdmMgrESUw7GEfr6Kmw,rcU4d555A0ypKcwGx46OOA,,,N,0,0,,,2013-11-01 17:00,2013-11-11 16:19,admin,admin
428,84336,1296,11356,1423,1,0,N,N,N,CP_Phys,TT_Task,DT_FixedDUR2,RV_OK,TK_NotStart,BEW/ST/WB4/1100,PCC & Pile Head Breaking,2553,4082.5,0,54,0,64,72,54,0,0,0,,,,2015-12-17 07:00,2015-12-27 17:00,,2014-02-25 09:30,2014-03-05 09:30,2014-02-25 09:30,2014-03-05 09:30,2014-02-25 09:30,2014-03-05 09:30,,2015-12-17 07:00,2015-12-27 17:00,,PT_Normal,,,,,p+D0nXfMUE+6BBeW4ZBbxA,Crpe08CdVUKI93M8AC8fFA,,,N,0,0,,,2013-11-01 17:00,2013-11-12 10:47,admin,admin
429,84337,1296,11356,1423,1,0,N,N,N,CP_Phys,TT_Task,DT_FixedDUR2,RV_OK,TK_NotStart,BEW/ST/WB4/1240,Concreting for Pile Cap / Pier Foundation,2511,4082.5,0,81,0,252,144,81,18,0,162,,,,2015-12-28 07:00,2016-01-07 17:00,,2014-03-05 09:30,2014-03-18 09:30,2014-03-05 09:30,2014-03-18 09:30,2014-03-05 09:30,2014-03-18 09:30,,2015-12-28 07:00,2016-01-07 17:00,,PT_Normal,,,,,cYuk/lX7/0qXYStH3rYYFw,zF3iw0giKE2wlrEGOlKpWw,,,N,0,0,,,2013-11-01 17:00,2013-11-11 16:19,admin,admin
430,84338,1296,11356,1423,1,0,N,N,N,CP_Phys,TT_Task,DT_FixedDUR2,RV_OK,TK_NotStart,BEW/ST/WB4/1540,Conceting including Formwork & Reinforcement fixing for Pier,2511,4082.5,138,126,0,392,144,126,18,0,252,,,,2016-01-10 07:00,2016-01-27 17:00,,2014-03-18 09:30,2014-04-07 09:30,2014-03-18 09:30,2014-04-07 09:30,2014-03-18 09:30,2014-04-07 09:30,,2016-01-10 07:00,2016-01-27 17:00,,PT_Normal,,,,,eKuRVZLN80a05ViVa26mMA,+ZnOA46oIkamWik8NLBibQ,,,N,0,0,,,2013-11-01 17:00,2013-11-11 16:19,admin,admin
431,84339,1296,11356,1423,1,0,N,N,N,CP_Drtn,TT_Task,DT_FixedDUR2,RV_OK,TK_NotStart,BEW/ST/WB4/1030,Structural Excavation,2511,3962.5,0,40,0,240,54,36,27,0,26.5,,,,2015-11-23 09:00,2015-11-29 14:00,,2014-02-18 15:30,2014-02-25 09:30,2014-02-18 15:30,2014-02-25 09:30,2014-02-18 15:30,2014-02-24 15:30,,2015-11-23 09:00,2015-11-29 14:00,,PT_Normal,,,,,KvVnscUL00aYsCI1BGL3Lw,aAUvSnKIek+eR3j1+BEl5g,,,N,0,0,,,2013-11-01 17:00,2013-11-11 16:19,admin,admin
432,84340,1296,11357,1423,1,0,N,N,N,CP_Phys,TT_Task,DT_FixedDUR2,RV_OK,TK_NotStart,BEW/ST/WB4/1180,PCC & Pile Head Breaking,2553,4042.5,0,54,0,64,72,54,0,0,0,,,,2015-12-17 07:00,2015-12-27 17:00,,2014-03-03 14:30,2014-03-11 14:30,2014-03-03 14:30,2014-03-11 14:30,2014-03-03 14:30,2014-03-11 14:30,,2015-12-17 07:00,2015-12-27 17:00,,PT_Normal,,,,,Y+MMSW5j80aV/ogES6UfCw,JO+r6R5+/E++/Tw1oFQP8Q,,,N,0,0,,,2013-11-01 17:00,2013-11-12 10:47,admin,admin
433,84341,1296,11357,1423,1,0,N,N,N,CP_Phys,TT_Task,DT_FixedDUR2,RV_OK,TK_NotStart,BEW/ST/WB4/1380,Concreting for Pile Cap / Pier Foundation,2511,4042.5,0,81,0,252,144,81,18,0,162,,,,2015-12-28 07:00,2016-01-07 17:00,,2014-03-11 14:30,2014-03-24 14:30,2014-03-11 14:30,2014-03-24 14:30,2014-03-11 14:30,2014-03-24 14:30,,2015-12-28 07:00,2016-01-07 17:00,,PT_Normal,,,,,+M4fPsFMiEKRGRlKeR6xdA,eIknqA68bESkci2KCqxESw,,,N,0,0,,,2013-11-01 17:00,2013-11-11 16:19,admin,admin
434,84342,1296,11357,1423,1,0,N,N,N,CP_Phys,TT_Task,DT_FixedDUR2,RV_OK,TK_NotStart,BEW/ST/WB4/1660,Conceting including Formwork & Reinforcement fixing for Pier,2511,4042.5,98,126,0,392,144,126,18,0,252,,,,2016-01-10 07:00,2016-01-27 17:00,,2014-03-24 14:30,2014-04-13 14:30,2014-03-24 14:30,2014-04-13 14:30,2014-03-24 14:30,2014-04-13 14:30,,2016-01-10 07:00,2016-01-27 17:00,,PT_Normal,,,,,uYWOqDHztUWXZ32q8fUsLQ,PI22c/GYhEyU1MTP7ogOew,,,N,0,0,,,2013-11-01 17:00,2013-11-11 16:19,admin,admin
435,84343,1296,11357,1423,1,0,N,N,N,CP_Drtn,TT_Task,DT_FixedDUR2,RV_OK,TK_NotStart,BEW/ST/WB4/1110,Structural Excavation,2511,3962.5,0,40,0,240,54,36,27,0,26.5,,,,2015-11-29 14:00,2015-12-06 08:00,,2014-02-25 09:30,2014-03-03 14:30,2014-02-25 09:30,2014-03-03 14:30,2014-02-25 09:30,2014-03-03 09:30,,2015-11-29 14:00,2015-12-06 08:00,,PT_Normal,,,,,+1Qw/HRS3UyocDLk1IbN+A,7+Tc6HGuoE6MHOTIik4OHQ,,,N,0,0,,,2013-11-01 17:00,2013-11-11 16:19,admin,admin
436,84344,1296,11317,1423,1,0,N,N,N,CP_Phys,TT_Task,DT_FixedDUR2,RV_OK,TK_NotStart,BEW/ST/WB4/1310,PCC & Pile Head Breaking,2553,4002.5,0,54,0,64,72,54,0,0,0,,,,2015-12-17 07:00,2015-12-27 17:00,,2014-03-10 08:30,2014-03-18 08:30,2014-03-10 08:30,2014-03-18 08:30,2014-03-10 08:30,2014-03-18 08:30,,2015-12-17 07:00,2015-12-27 17:00,,PT_Normal,,,,,h/HP6rIidkSfRZwY7EV9uw,UXw0MRAu+ECI75LDIg9dGA,,,N,0,0,,,2013-11-01 17:00,2013-11-12 10:47,admin,admin
437,84345,1296,11317,1423,1,0,N,N,N,CP_Phys,TT_Task,DT_FixedDUR2,RV_OK,TK_NotStart,BEW/ST/WB4/1490,Concreting for Pile Cap / Pier Foundation,2511,4002.5,0,81,0,252,144,81,18,0,162,,,,2015-12-28 07:00,2016-01-07 17:00,,2014-03-18 08:30,2014-03-31 08:30,2014-03-18 08:30,2014-03-31 08:30,2014-03-18 08:30,2014-03-31 08:30,,2015-12-28 07:00,2016-01-07 17:00,,PT_Normal,,,,,2Al6HpOcOUqMPigLDGC7Fw,6jv3BcTv2k25x9GRDQ9umQ,,,N,0,0,,,2013-11-01 17:00,2013-11-11 16:19,admin,admin
438,84346,1296,11317,1423,1,0,N,N,N,CP_Phys,TT_Task,DT_FixedDUR2,RV_OK,TK_NotStart,BEW/ST/WB4/1740,Conceting including Formwork & Reinforcement fixing for Pier,2511,4002.5,58,126,0,392,144,126,18,0,252,,,,2016-01-10 07:00,2016-01-27 17:00,,2014-03-31 08:30,2014-04-20 08:30,2014-03-31 08:30,2014-04-20 08:30,2014-03-31 08:30,2014-04-20 08:30,,2016-01-10 07:00,2016-01-27 17:00,,PT_Normal,,,,,hMwnDUDpHUWZG9xC+07ArQ,gmcbf7jga02N+hDSn7EWJQ,,,N,0,0,,,2013-11-01 17:00,2013-11-11 16:19,admin,admin
439,84347,1296,11317,1423,1,0,N,N,N,CP_Drtn,TT_Task,DT_FixedDUR2,RV_OK,TK_NotStart,BEW/ST/WB4/1190,Structural Excavation,2511,3962.5,0,40,0,240,54,36,27,0,26.5,,,,2015-12-06 08:00,2015-12-10 12:00,,2014-03-03 14:30,2014-03-10 08:30,2014-03-03 14:30,2014-03-10 08:30,2014-03-03 14:30,2014-03-09 14:30,,2015-12-06 08:00,2015-12-10 12:00,,PT_Normal,,,,,fCVWvrPcLUGJTyvfjIXwhg,ug/mh1Su1UeX6MWL4O87ng,,,N,0,0,,,2013-11-01 17:00,2013-11-11 16:19,admin,admin
440,84348,1296,11390,1423,1,0,N,N,N,CP_Phys,TT_Task,DT_FixedDUR2,RV_OK,TK_NotStart,BEW/ST/WB4/1320,PCC & Pile Head Breaking,2553,3984.5,0,54,0,64,72,54,0,0,0,,,,2015-12-15 07:00,2015-12-22 17:00,,2014-03-10 08:30,2014-03-18 08:30,2014-03-10 08:30,2014-03-18 08:30,2014-03-10 08:30,2014-03-18 08:30,,2015-12-15 07:00,2015-12-22 17:00,,PT_Normal,,,,,bbg+vXrUCUald7y6rAYA0Q,gQo8cM9kg06SM86nOkIpvA,,,N,0,0,,,2013-11-01 17:00,2013-11-12 10:47,admin,admin
441,84349,1296,11390,1423,1,0,N,N,N,CP_Phys,TT_Task,DT_FixedDUR2,RV_OK,TK_NotStart,BEW/ST/WB4/1500,Concreting for Pile Cap / Abutment Foundation,2511,3984.5,0,81,0,252,144,81,18,0,162,,,,2015-12-24 07:00,2016-01-05 17:00,,2014-03-18 08:30,2014-03-31 08:30,2014-03-18 08:30,2014-03-31 08:30,2014-03-18 08:30,2014-03-31 08:30,,2015-12-24 07:00,2016-01-05 17:00,,PT_Normal,,,,,CYLPUPDlVUabSas2A/jhtA,sYTtCoSXEU+wQD5+K6f6Ig,,,N,0,0,,,2013-11-01 17:00,2013-11-11 16:19,admin,admin
442,84350,1296,11390,1423,1,0,N,N,N,CP_Phys,TT_Task,DT_FixedDUR2,RV_OK,TK_NotStart,BEW/ST/WB4/1750,Conceting including Formwork & Reinforcement fixing for Abutment,2511,3984.5,40,144,0,392,234,144,18,0,252,,,,2016-01-06 07:00,2016-01-27 17:00,,2014-03-31 08:30,2014-04-22 08:30,2014-03-31 08:30,2014-04-22 08:30,2014-03-31 08:30,2014-04-22 08:30,,2016-01-06 07:00,2016-01-27 17:00,,PT_Normal,,,,,A4+eL3yPWUeK1et9fpTDAA,l7RVZNYdI0+bB6HdIRzFjw,,,N,0,0,,,2013-11-01 17:00,2013-11-11 16:19,admin,admin
443,84351,1296,11390,1423,1,0,N,N,N,CP_Drtn,TT_Task,DT_FixedDUR2,RV_OK,TK_NotStart,BEW/ST/WB4/1200,Structural Excavation,2511,3944.5,0,40,0,240,54,36,27,0,26.5,,,,2015-12-02 08:00,2015-12-08 12:00,,2014-03-03 14:30,2014-03-10 08:30,2014-03-03 14:30,2014-03-10 08:30,2014-03-03 14:30,2014-03-09 14:30,,2015-12-02 08:00,2015-12-08 12:00,,PT_Normal,,,,,96c/eg+EpEqmotuByVdWJA,8DlHhga5Z0mQJnAgodq0vQ,,,N,0,0,,,2013-11-01 17:00,2013-11-11 16:19,admin,admin
444,84352,1296,11386,1423,1,0,N,N,N,CP_Phys,TT_Task,DT_FixedDUR2,RV_OK,TK_NotStart,BEW/ST/WB4/1420,PCC & Pile Head Breaking,2553,3962.5,0,54,0,64,72,54,0,0,0,,,,2015-12-17 07:00,2015-12-27 17:00,,2014-03-16 13:30,2014-03-24 13:30,2014-03-16 13:30,2014-03-24 13:30,2014-03-16 13:30,2014-03-24 13:30,,2015-12-17 07:00,2015-12-27 17:00,,PT_Normal,,,,,8RNuEgWAaE+TLo3OJs2FKw,sm8ixqnDOkWjZih04PsUiQ,,,N,0,0,,,2013-11-01 17:00,2013-11-12 10:47,admin,admin
445,84353,1296,11386,1423,1,0,N,N,N,CP_Phys,TT_Task,DT_FixedDUR2,RV_OK,TK_NotStart,BEW/ST/WB4/1610,Concreting for Pile Cap / Pier Foundation,2511,3962.5,0,81,0,252,144,81,18,0,162,,,,2015-12-28 07:00,2016-01-07 17:00,,2014-03-24 13:30,2014-04-06 13:30,2014-03-24 13:30,2014-04-06 13:30,2014-03-24 13:30,2014-04-06 13:30,,2015-12-28 07:00,2016-01-07 17:00,,PT_Normal,,,,,jbKNzvKgKkWfECOyhP5PLg,onyrDbkm+kmTI3/hkU4UBg,,,N,0,0,,,2013-11-01 17:00,2013-11-11 16:19,admin,admin
446,84354,1296,11386,1423,1,0,N,N,N,CP_Phys,TT_Task,DT_FixedDUR2,RV_OK,TK_NotStart,BEW/ST/WB4/1790,Conceting including Formwork & Reinforcement fixing for Pier,2511,3962.5,18,126,0,392,144,126,18,0,252,,,,2016-01-10 07:00,2016-01-27 17:00,,2014-04-06 13:30,2014-04-24 13:30,2014-04-06 13:30,2014-04-24 13:30,2014-04-06 13:30,2014-04-24 13:30,,2016-01-10 07:00,2016-01-27 17:00,,PT_Normal,,,,,+9/GxzT2KU2Y5jmHG5lHIA,ZElFs2N3pkiyLLmOR1tXXw,,,N,0,0,,,2013-11-01 17:00,2013-11-11 16:19,admin,admin
447,84355,1296,11386,1423,1,0,N,N,N,CP_Drtn,TT_Task,DT_FixedDUR2,RV_OK,TK_NotStart,BEW/ST/WB4/1330,Structural Excavation,2511,3962.5,0,40,0,240,54,36,27,0,26.5,,,,2015-12-10 13:00,2015-12-16 17:00,,2014-03-10 08:30,2014-03-16 13:30,2014-03-10 08:30,2014-03-16 13:30,2014-03-10 08:30,2014-03-16 08:30,,2015-12-10 13:00,2015-12-16 17:00,,PT_Normal,,,,,Vj2Ds+b6k0ODIwGLM2X6yA,JphjNQLkuEyMoJHqtrubzQ,,,N,0,0,,,2013-11-01 17:00,2013-11-11 16:19,admin,admin
448,84356,1296,11387,1423,1,0,N,N,N,CP_Phys,TT_Task,DT_FixedDUR2,RV_OK,TK_NotStart,BEW/ST/WB4/1570,PCC & Pile Head Breaking,2553,4066.5,0,54,0,64,72,54,0,0,0,,,,2016-01-11 07:00,2016-01-18 17:00,,2014-03-23 07:30,2014-03-31 07:30,2014-03-23 07:30,2014-03-31 07:30,2014-03-23 07:30,2014-03-31 07:30,,2016-01-11 07:00,2016-01-18 17:00,,PT_Normal,,,,,o7incJq+iUCslV3IZMNvpA,P9gzOdV0eEWtEe/1lKv/Rw,,,N,0,0,,,2013-11-01 17:00,2013-11-12 10:47,admin,admin
449,84357,1296,11387,1423,1,0,N,N,N,CP_Phys,TT_Task,DT_FixedDUR2,RV_OK,TK_NotStart,BEW/ST/WB4/1700,Concreting for Pile Cap / Pier Foundation,2511,4066.5,0,81,0,252,144,81,18,0,162,,,,2016-01-19 07:00,2016-01-31 17:00,,2014-03-31 07:30,2014-04-13 07:30,2014-03-31 07:30,2014-04-13 07:30,2014-03-31 07:30,2014-04-13 07:30,,2016-01-19 07:00,2016-01-31 17:00,,PT_Normal,,,,,UdIKinLsJkGVkl1nH1Nzdw,Io7V056Nb0ymXSKqjuIlhA,,,N,0,0,,,2013-11-01 17:00,2013-11-11 16:19,admin,admin
450,84358,1296,11387,1423,1,0,N,N,N,CP_Phys,TT_Task,DT_FixedDUR2,RV_OK,TK_NotStart,BEW/ST/WB4/1830,Conceting including Formwork & Reinforcement fixing for Pier,2511,4066.5,122,126,0,392,144,126,18,0,252,,,,2016-02-01 07:00,2016-02-18 17:00,,2014-04-13 07:30,2014-05-01 07:30,2014-04-13 07:30,2014-05-01 07:30,2014-04-13 07:30,2014-05-01 07:30,,2016-02-01 07:00,2016-02-18 17:00,,PT_Normal,,,,,zipLx60/ukqsetfMzlFaZA,gsp51qJtsUmxIPv8UA/OIA,,,N,0,0,,,2013-11-01 17:00,2013-11-11 16:19,admin,admin
451,84359,1296,11387,1423,1,0,N,N,N,CP_Drtn,TT_Task,DT_FixedDUR2,RV_OK,TK_NotStart,BEW/ST/WB4/1430,Structural Excavation,2511,4066.5,0,40,0,240,54,36,27,0,26.5,,,,2016-01-04 13:00,2016-01-10 17:00,,2014-03-16 13:30,2014-03-23 07:30,2014-03-16 13:30,2014-03-23 07:30,2014-03-16 13:30,2014-03-20 13:30,,2016-01-04 13:00,2016-01-10 17:00,,PT_Normal,,,,,QrPtUrprFEOINhFeDv041Q,9GI/lX/E2EKpsM7SXFrneA,,,N,0,0,,,2013-11-01 17:00,2013-11-11 16:19,admin,admin
452,84360,1296,11388,1423,1,0,N,N,N,CP_Phys,TT_Task,DT_FixedDUR2,RV_OK,TK_NotStart,BEW/ST/WB4/1440,PCC & Pile Head Breaking,2553,4106.5,0,54,0,64,72,54,0,0,0,,,,2016-01-11 07:00,2016-01-18 17:00,,2014-03-16 13:30,2014-03-24 13:30,2014-03-16 13:30,2014-03-24 13:30,2014-03-16 13:30,2014-03-24 13:30,,2016-01-11 07:00,2016-01-18 17:00,,PT_Normal,,,,,EqRbBKGqG0WkB+Suziu94A,mi+JPmgSuUmQrZLcbduVDg,,,N,0,0,,,2013-11-01 17:00,2013-11-12 10:47,admin,admin
453,84361,1296,11388,1423,1,0,N,N,N,CP_Phys,TT_Task,DT_FixedDUR2,RV_OK,TK_NotStart,BEW/ST/WB4/1620,Concreting for Pile Cap / Pier Foundation,2511,4106.5,0,81,0,252,144,81,18,0,162,,,,2016-01-19 07:00,2016-01-31 17:00,,2014-03-24 13:30,2014-04-06 13:30,2014-03-24 13:30,2014-04-06 13:30,2014-03-24 13:30,2014-04-06 13:30,,2016-01-19 07:00,2016-01-31 17:00,,PT_Normal,,,,,DNixEMiiWUGwtJb9BBmLwg,DPsyVRdTUkehCbW1AlcVcQ,,,N,0,0,,,2013-11-01 17:00,2013-11-11 16:19,admin,admin
454,84362,1296,11388,1423,1,0,N,N,N,CP_Phys,TT_Task,DT_FixedDUR2,RV_OK,TK_NotStart,BEW/ST/WB4/1800,Conceting including Formwork & Reinforcement fixing for Pier,2511,4106.5,162,126,0,392,144,126,18,0,252,,,,2016-02-01 07:00,2016-02-18 17:00,,2014-04-06 13:30,2014-04-24 13:30,2014-04-06 13:30,2014-04-24 13:30,2014-04-06 13:30,2014-04-24 13:30,,2016-02-01 07:00,2016-02-18 17:00,,PT_Normal,,,,,MOPcWD50A0KS/mxRuRUhYg,TnEAAQYxbUKQF2BPq7PlVw,,,N,0,0,,,2013-11-01 17:00,2013-11-11 16:19,admin,admin
455,84363,1296,11388,1423,1,0,N,N,N,CP_Drtn,TT_Task,DT_FixedDUR2,RV_OK,TK_NotStart,BEW/ST/WB4/1340,Structural Excavation,2511,4066.5,0,40,0,240,54,36,27,0,26.5,,,,2015-12-29 08:00,2016-01-04 12:00,,2014-03-10 08:30,2014-03-16 13:30,2014-03-10 08:30,2014-03-16 13:30,2014-03-10 08:30,2014-03-16 08:30,,2015-12-29 08:00,2016-01-04 12:00,,PT_Normal,,,,,6j1wt6RhHEeKyyJOovZDTg,ZM48856i90aDzned9HAvYw,,,N,0,0,,,2013-11-01 17:00,2013-11-11 16:19,admin,admin
456,84364,1296,11389,1423,1,0,N,N,N,CP_Phys,TT_Task,DT_FixedDUR2,RV_OK,TK_NotStart,BEW/ST/WB4/1580,PCC & Pile Head Breaking,2553,4066.5,0,54,0,64,72,54,0,0,0,,,,2016-01-11 07:00,2016-01-18 17:00,,2014-03-23 07:30,2014-03-31 07:30,2014-03-23 07:30,2014-03-31 07:30,2014-03-23 07:30,2014-03-31 07:30,,2016-01-11 07:00,2016-01-18 17:00,,PT_Normal,,,,,b2dgEtmsxEiA4vcIoA/TJw,bzb02Le2VUaddwhOTVUtFA,,,N,0,0,,,2013-11-01 17:00,2013-11-12 10:47,admin,admin
457,84365,1296,11389,1423,1,0,N,N,N,CP_Phys,TT_Task,DT_FixedDUR2,RV_OK,TK_NotStart,BEW/ST/WB4/1710,Concreting for Pile Cap / Pier Foundation,2511,4066.5,0,81,0,252,144,81,18,0,162,,,,2016-01-19 07:00,2016-01-31 17:00,,2014-03-31 07:30,2014-04-13 07:30,2014-03-31 07:30,2014-04-13 07:30,2014-03-31 07:30,2014-04-13 07:30,,2016-01-19 07:00,2016-01-31 17:00,,PT_Normal,,,,,KAdHXG91XUaMSm/SZqlIJg,dpot+KQlP0GoIWF5/xj61w,,,N,0,0,,,2013-11-01 17:00,2013-11-11 16:19,admin,admin
458,84366,1296,11389,1423,1,0,N,N,N,CP_Phys,TT_Task,DT_FixedDUR2,RV_OK,TK_NotStart,BEW/ST/WB4/1840,Conceting including Formwork & Reinforcement fixing for Pier,2511,4066.5,122,126,0,392,144,126,18,0,252,,,,2016-02-01 07:00,2016-02-18 17:00,,2014-04-13 07:30,2014-05-01 07:30,2014-04-13 07:30,2014-05-01 07:30,2014-04-13 07:30,2014-05-01 07:30,,2016-02-01 07:00,2016-02-18 17:00,,PT_Normal,,,,,R/ZjdmDRvEWFXEF0kf0AsA,cQtkw9kcs0mV+5QLkEopLg,,,N,0,0,,,2013-11-01 17:00,2013-11-11 16:19,admin,admin
459,84367,1296,11389,1423,1,0,N,N,N,CP_Drtn,TT_Task,DT_FixedDUR2,RV_OK,TK_NotStart,BEW/ST/WB4/1450,Structural Excavation,2511,4066.5,0,40,0,240,54,36,27,0,26.5,,,,2016-01-04 13:00,2016-01-10 17:00,,2014-03-16 13:30,2014-03-23 07:30,2014-03-16 13:30,2014-03-23 07:30,2014-03-16 13:30,2014-03-20 13:30,,2016-01-04 13:00,2016-01-10 17:00,,PT_Normal,,,,,kfZzvaIuUk+TZXVhn8BwvQ,sh8PpjCipUuxmZrn+m86+A,,,N,0,0,,,2013-11-01 17:00,2013-11-11 16:19,admin,admin
460,84368,1296,11418,1423,1,0,N,N,N,CP_Drtn,TT_Task,DT_FixedDUR2,RV_OK,TK_NotStart,BEW/ST/WB4/2230,Placing of I - Girders on temp Support Span 5-8,2511,3944.5,0,144,0,288,144,144,18,0,144,,,,2016-02-21 07:00,2016-03-13 17:00,,2014-05-20 13:30,2014-06-12 13:30,2014-05-20 13:30,2014-06-12 13:30,2014-05-20 13:30,2014-06-12 13:30,,2016-02-21 07:00,2016-03-13 17:00,,PT_Normal,,,,,l4BXgNgenUWbASjo4Koz3A,7Z/7FZgWLU+/+dVarQ6/kQ,,,N,0,0,,,2013-11-01 17:00,2013-11-11 16:19,admin,admin
461,84369,1296,11418,1423,1,0,N,N,N,CP_Drtn,TT_Task,DT_FixedDUR2,RV_OK,TK_NotStart,BEW/ST/WB4/2260,Pre-Cast Slab Placing Span 5-8 & Diaphram Wall,2553,3944.5,0,144,0,576,180,144,9,0,144,,,,2016-03-14 07:00,2016-04-04 17:00,,2014-06-12 13:30,2014-07-06 13:30,2014-06-12 13:30,2014-07-06 13:30,2014-06-12 13:30,2014-07-06 13:30,,2016-03-14 07:00,2016-04-04 17:00,,PT_Normal,,,,,z1bPTv1apEOt+sBA1Nui/Q,teWZeVDjOkObPRROjUbE6Q,,,N,0,0,,,2013-11-01 17:00,2013-11-11 16:19,admin,admin
462,84370,1296,11418,1423,1,0,N,N,N,CP_Drtn,TT_Task,DT_FixedDUR2,RV_OK,TK_NotStart,BEW/ST/WB4/2270,"Span 5-8, Slab Casting including Staging, Shuttering & Rienforcement fixing and bearing",2553,3944.5,0,180,0,720,288,180,9,0,180,,,,2016-04-05 07:00,2016-05-02 17:00,,2014-07-06 13:30,2014-08-10 13:30,2014-07-06 13:30,2014-08-10 13:30,2014-07-06 13:30,2014-08-10 13:30,,2016-04-05 07:00,2016-05-02 17:00,,PT_Normal,,,,,VqXm2YpvZU6t5mJMKTsXOw,yjJPQbZQyEeAwo2i02ipUA,,,N,0,0,,,2013-11-01 17:00,2013-11-11 16:19,admin,admin
463,84371,1296,11413,1423,1,0,N,N,N,CP_Phys,TT_Task,DT_FixedDUR2,RV_OK,TK_NotStart,BEW/ST/WB4/2100,Bed Preparation and priliminary activities,,3951.5,0,108,0,0,0,108,0,0,0,,,,2015-12-01 07:00,2015-12-16 17:00,,2014-02-27 15:30,2014-03-17 15:30,2014-02-27 15:30,2014-03-17 15:30,2014-02-27 15:30,2014-03-17 15:30,,2015-12-01 07:00,2015-12-16 17:00,,PT_Normal,,,,,KgAPYoPtdU+VNoKGDjKXow,opp4oklWNE2noGOjgfOeoA,,,N,0,0,,,2013-11-01 17:00,2013-11-11 16:56,admin,admin
464,84372,1296,11413,1423,1,0,N,N,N,CP_Phys,TT_Task,DT_FixedDUR2,RV_OK,TK_NotStart,BEW/ST/WB4/2130,"Span 1-3 Casting of I-Girders including Threading, Placing Anchor Blocks & Stressing from Both Sides",2553,3951.5,0,189,0,864,270,189,45,0,648,,,,2015-12-17 07:00,2016-01-17 17:00,,2014-03-17 15:30,2014-04-15 15:30,2014-03-17 15:30,2014-04-15 15:30,2014-03-17 15:30,2014-04-15 15:30,,2015-12-17 07:00,2016-01-17 17:00,,PT_Normal,,,,,mk30wO7UP0Ww2dycz3L6Vw,U3cwKEvMmkCYaZE0oygOKg,,,N,0,0,,,2013-11-01 17:00,2013-11-11 16:56,admin,admin
465,84373,1296,11413,1423,1,0,N,N,N,CP_Phys,TT_Task,DT_FixedDUR2,RV_OK,TK_NotStart,BEW/ST/WB4/2110,Span 1-4 Casting of Precast Slabs,,5103.5,0,216,0,648,54,216,0,0,0,,,,2016-06-16 07:00,2016-07-25 17:00,,2014-03-17 15:30,2014-04-20 15:30,2014-03-17 15:30,2014-04-20 15:30,2014-03-17 15:30,2014-04-20 15:30,,2016-06-16 07:00,2016-07-25 17:00,,PT_Normal,,,,,1M2dD1BLjUiq79837+PlDA,enKg79E39keBu/1OLtzmXw,,,N,0,0,,,2013-11-01 17:00,2013-11-11 16:56,admin,admin
466,84374,1296,11413,1423,1,0,N,N,N,CP_Phys,TT_Task,DT_FixedDUR2,RV_OK,TK_NotStart,BEW/ST/WB4/2170,"Span 4-6 Casting of I-Girders including Threading, Placing Anchor Blocks & Stressing from Both Sides",2553,3951.5,0,216,0,864,270,216,45,0,648,,,,2016-01-18 07:00,2016-02-18 17:00,,2014-04-15 15:30,2014-05-19 15:30,2014-04-15 15:30,2014-05-19 15:30,2014-04-15 15:30,2014-05-19 15:30,,2016-01-18 07:00,2016-02-18 17:00,,PT_Normal,,,,,68VfuFRywkCTXkN1BTOXbg,zZOM8NRjSkOs5bTZW53fdw,,,N,0,0,,,2013-11-01 17:00,2013-11-11 16:56,admin,admin
467,84375,1296,11413,1423,1,0,N,N,N,CP_Phys,TT_Task,DT_FixedDUR2,RV_OK,TK_NotStart,BEW/ST/WB4/2150,Span 5-8 Casting of Precast Slabs,,5103.5,5103.5,216,0,648,54,216,0,0,0,,,,2016-07-26 07:00,2016-08-28 17:00,,2014-04-20 15:30,2014-05-22 15:30,2014-04-20 15:30,2014-05-22 15:30,2014-04-20 15:30,2014-05-22 15:30,,2016-07-26 07:00,2016-08-28 17:00,,PT_Normal,,,,,+hHQUyhk7kWp5TxNExBzJQ,jzViNP3EgkydU7Qvu22bGw,,,N,0,0,,,2013-11-01 17:00,2013-11-11 16:56,admin,admin
468,84376,1296,11413,1423,1,0,N,N,N,CP_Phys,TT_Task,DT_FixedDUR2,RV_OK,TK_NotStart,BEW/ST/WB4/2240,"Span 7- 8 Casting of I-Girders including Threading, Placing Anchor Blocks & Stressing from Both Sides",2553,5004.5,5004.5,126,0,864,270,126,45,0,648,,,,2016-08-09 07:00,2016-08-28 17:00,,2014-05-19 15:30,2014-06-09 15:30,2014-05-19 15:30,2014-06-09 15:30,2014-05-19 15:30,2014-06-09 15:30,,2016-08-09 07:00,2016-08-28 17:00,,PT_Normal,,,,,iM7z+TaKTkC9K8UoO28wDw,UrNwGV6JE0iS+b2CJLK/Xg,,,N,0,0,,,2013-11-01 17:00,2013-11-11 16:56,admin,admin
469,84377,1296,11421,1423,1,0,N,N,N,CP_Phys,TT_Task,DT_FixedDUR2,RV_OK,TK_NotStart,BEW/ST/WB4/1460,Excavation for Retaining Wall A1 Side,2553,3976.5,0,36,0,54,45,36,9,0,36,,,,2015-12-20 13:00,2015-12-27 12:00,,2014-03-16 13:30,2014-03-20 13:30,2014-03-16 13:30,2014-03-20 13:30,2014-03-16 13:30,2014-03-20 13:30,,2015-12-20 13:00,2015-12-27 12:00,,PT_Normal,,,,,960xRF17O0GcmrNI++rRJA,zaWmlY0ev0eHVzNpq0969g,,,N,0,0,,,2013-11-01 17:00,2013-11-09 23:03,admin,admin
470,84378,1296,11421,1423,1,0,N,N,N,CP_Phys,TT_Task,DT_FixedDUR2,RV_OK,TK_NotStart,BEW/ST/WB4/1550,Foundation for Retaining Wall A1 Side,2553,4232.5,0,108,0,432,180,108,18,0,216,,,,2016-02-04 07:00,2016-02-21 17:00,,2014-03-20 13:30,2014-04-07 13:30,2014-03-20 13:30,2014-04-07 13:30,2014-03-20 13:30,2014-04-07 13:30,,2016-02-04 07:00,2016-02-21 17:00,,PT_Normal,,,,,GQxu26oWYUKcgQTOcRKWfA,vy/imNIE+kSF8CbLGHZoAg,,,N,0,0,,,2013-11-01 17:00,2013-11-11 13:11,admin,admin
471,84379,1296,11421,1423,1,0,N,N,N,CP_Phys,TT_Task,DT_FixedDUR2,RV_OK,TK_NotStart,BEW/ST/WB4/1810,Wall instalation of A1 Side,2553,4232.5,0,216,0,648,126,216,18,0,24,,,,2016-02-22 07:00,2016-03-24 17:00,,2014-04-07 13:30,2014-05-11 13:30,2014-04-07 13:30,2014-05-11 13:30,2014-04-07 13:30,2014-05-11 13:30,,2016-02-22 07:00,2016-03-24 17:00,,PT_Normal,,,,,+QHbQ/0xmkSiSQugBhmb+A,YOZJus5UbEWa04zu/PDfOw,,,N,0,0,,,2013-11-01 17:00,2013-11-09 23:03,admin,admin
472,84380,1296,11421,1423,1,0,N,N,N,CP_Phys,TT_Task,DT_FixedDUR2,RV_OK,TK_NotStart,BEW/ST/WB4/1820,Earth filling & Embankment Preparation A1 Side,2553,4232.5,0,189,0,378,90,189,72,0,756,,,,2016-02-22 07:00,2016-03-21 17:00,,2014-04-07 13:30,2014-05-06 13:30,2014-04-07 13:30,2014-05-06 13:30,2014-04-07 13:30,2014-05-06 13:30,,2016-02-22 07:00,2016-03-21 17:00,,PT_Normal,,,,,zctxpWjmjUanIvFJQOfKRw,Rg40ubeJd0K5SRBdUDX9SQ,,,N,0,0,,,2013-11-01 17:00,2013-11-12 09:52,admin,admin
473,84381,1296,11421,1423,1,0,N,N,N,CP_Phys,TT_Task,DT_FixedDUR2,RV_OK,TK_NotStart,BEW/ST/WB4/1880,Granular Sub-Base A1 Side,2553,4232.5,0,135,0,270,72,135,63,0,180,,,,2016-03-22 07:00,2016-04-11 17:00,,2014-05-06 13:30,2014-05-28 13:30,2014-05-06 13:30,2014-05-28 13:30,2014-05-06 13:30,2014-05-28 13:30,,2016-03-22 07:00,2016-04-11 17:00,,PT_Normal,,,,,Gb2pR5FBC0WiyfFabSe0KA,CeAfR8aWY0OSxYzTYZS/pA,,,N,0,0,,,2013-11-01 17:00,2013-11-11 23:01,admin,admin
474,84382,1296,11421,1423,1,0,N,N,N,CP_Phys,TT_Task,DT_FixedDUR2,RV_OK,TK_NotStart,BEW/ST/WB4/1970,Aggregate Base Course,2553,3976.5,0,90,0,180,90,90,74,0,110,,,,2016-04-25 07:00,2016-05-09 17:00,,2014-07-21 07:30,2014-08-11 07:30,2014-07-21 07:30,2014-08-11 07:30,2014-07-21 07:30,2014-08-11 07:30,,2016-04-25 07:00,2016-05-09 17:00,,PT_Normal,,,,,r9Im0Gt+vEqVYh6Qr0Y/ig,ayJ59SLs8EufI64+N9mZZA,,,N,0,0,,,2013-11-01 17:00,2013-11-12 09:57,admin,admin
475,84383,1296,11421,1423,1,0,N,N,N,CP_Phys,TT_Task,DT_FixedDUR2,RV_OK,TK_NotStart,BEW/ST/WB4/1990,Crash Barrier & Median Works,2553,3976.5,194,180,0,720,162,180,18,0,360,,,,2016-05-10 07:00,2016-06-06 17:00,,2014-08-11 07:30,2014-09-08 07:30,2014-08-11 07:30,2014-09-08 07:30,2014-08-11 07:30,2014-09-08 07:30,,2016-05-10 07:00,2016-06-06 17:00,,PT_Normal,,,,,cZzBd4tL20+whNzDiMTPHw,eFs4fM47ZEuJxGV/brUl8Q,,,N,0,0,,,2013-11-01 17:00,2013-11-11 16:19,admin,admin
476,84384,1296,11421,1423,1,0,N,N,N,CP_Phys,TT_Task,DT_FixedDUR2,RV_OK,TK_NotStart,BEW/ST/WB4/2290,Bituminous Base Course Including IC,2553,3976.5,0,90,0,180,90,90,76,0,60,,,,2016-05-10 07:00,2016-05-23 17:00,,2014-08-11 07:30,2014-08-25 07:30,2014-08-11 07:30,2014-08-25 07:30,2014-08-11 07:30,2014-08-25 07:30,,2016-05-10 07:00,2016-05-23 17:00,,PT_Normal,,,,,ryTlN8Wt1USPM9nXgArIlg,qRBcCJ1/+kuKNPdBtiakKQ,,,N,0,0,,,2013-11-01 17:00,2013-11-12 10:02,admin,admin
477,84385,1296,11421,1423,1,0,N,N,N,CP_Phys,TT_Task,DT_FixedDUR2,RV_OK,TK_NotStart,BEW/ST/WB4/2300,Bituminous Wearing Course,2553,3976.5,194,90,0,180,90,90,78,0,70,,,,2016-05-24 07:00,2016-06-06 17:00,,2014-08-25 07:30,2014-09-08 07:30,2014-08-25 07:30,2014-09-08 07:30,2014-08-25 07:30,2014-09-08 07:30,,2016-05-24 07:00,2016-06-06 17:00,,PT_Normal,,,,,rInMi+AOAky9FJnPd8iJ0g,mmr6Ih31iUa30KUJTOYksQ,,,N,0,0,,,2013-11-01 17:00,2013-11-11 22:51,admin,admin
478,84386,1296,11421,1423,1,0,N,N,N,CP_Phys,TT_Task,DT_FixedDUR2,RV_OK,TK_NotStart,BEW/ST/WB4/2310,Miscellaneous Works,2553,3782.5,0,180,0,180,180,180,0,0,0,,,,2016-06-07 07:00,2016-07-04 17:00,,2014-10-09 14:30,2014-11-06 14:30,2014-10-09 14:30,2014-11-06 14:30,2014-10-09 14:30,2014-11-06 14:30,,2016-06-07 07:00,2016-07-04 17:00,,PT_Normal,,,,,Qc8Yjlhe70Okxq5rZY+sGQ,KusyUKP6wkKG67UV+GZ/zg,,,N,0,0,,,2013-11-01 17:00,2013-11-11 16:19,admin,admin
479,84387,1296,11421,1423,1,0,N,N,N,CP_Drtn,TT_Task,DT_FixedDUR2,RV_OK,TK_NotStart,BEW/ST/WB4/1560,Excavation for Retaining Wall A2 Side,2553,3976.5,0,40,0,80,49,40,9,0,40,,,,2015-12-27 13:00,2015-12-31 17:00,,2014-03-20 13:30,2014-03-27 07:30,2014-03-20 13:30,2014-03-27 07:30,2014-03-20 13:30,2014-03-27 07:30,,2015-12-27 13:00,2015-12-31 17:00,,PT_Normal,,,,,amaGQUIQ3UyGREnDqmV3Fw,YqbrPsla3EGOFUH2ePTW7w,,,N,0,0,,,2013-11-01 17:00,2013-11-09 23:03,admin,admin
480,84388,1296,11421,1423,1,0,N,N,N,CP_Drtn,TT_Task,DT_FixedDUR2,RV_OK,TK_NotStart,BEW/ST/WB4/1690,Foundation for Retaining Wall A2 Side,2553,3976.5,0,108,0,432,180,108,18,0,216,,,,2016-01-03 07:00,2016-01-18 17:00,,2014-03-27 07:30,2014-04-14 07:30,2014-03-27 07:30,2014-04-14 07:30,2014-03-27 07:30,2014-04-14 07:30,,2016-01-03 07:00,2016-01-18 17:00,,PT_Normal,,,,,OV3e6jqse0qC2OY8pfZl5g,aXtogeCxy0+rBPL9HCvFZQ,,,N,0,0,,,2013-11-01 17:00,2013-11-11 13:11,admin,admin
481,84389,1296,11421,1423,1,0,N,N,N,CP_Drtn,TT_Task,DT_FixedDUR2,RV_OK,TK_NotStart,BEW/ST/WB4/1850,Wall instalation of A2 Side,2553,3976.5,0,216,0,648,126,216,18,0,216,,,,2016-01-19 07:00,2016-02-21 17:00,,2014-04-14 07:30,2014-05-18 07:30,2014-04-14 07:30,2014-05-18 07:30,2014-04-14 07:30,2014-05-18 07:30,,2016-01-19 07:00,2016-02-21 17:00,,PT_Normal,,,,,QYk/0WZZK0KDwFHTPXA+aw,fonnpR5690W9l9FqdjmsfQ,,,N,0,0,,,2013-11-01 17:00,2013-11-09 23:03,admin,admin
482,84390,1296,11421,1423,1,0,N,N,N,CP_Drtn,TT_Task,DT_FixedDUR2,RV_OK,TK_NotStart,BEW/ST/WB4/1900,Earth filling & Embankment Preparation A2 Side,2553,3976.5,0,189,0,378,90,189,72,0,756,,,,2016-02-22 07:00,2016-03-21 17:00,,2014-05-18 07:30,2014-06-17 07:30,2014-05-18 07:30,2014-06-17 07:30,2014-05-18 07:30,2014-06-17 07:30,,2016-02-22 07:00,2016-03-21 17:00,,PT_Normal,,,,,u9/UObGBOUq+ASexWsOhxQ,6inbsCQQy0iwerosY+K5oQ,,,N,0,0,,,2013-11-01 17:00,2013-11-12 09:52,admin,admin
483,84391,1296,11421,1423,1,0,N,N,N,CP_Drtn,TT_Task,DT_FixedDUR2,RV_OK,TK_NotStart,BEW/ST/WB4/1930,Granular Sub-Base A2 Side,2553,3976.5,0,135,0,270,72,135,63,0,540,,,,2016-03-22 07:00,2016-04-11 17:00,,2014-06-17 07:30,2014-07-08 07:30,2014-06-17 07:30,2014-07-08 07:30,2014-06-17 07:30,2014-07-08 07:30,,2016-03-22 07:00,2016-04-11 17:00,,PT_Normal,,,,,Tv9/sPC710awYq8+QC5Nvw,iZJ8+ZcW/Um1JI/fpHpPRA,,,N,0,0,,,2013-11-01 17:00,2013-11-11 23:01,admin,admin
484,84392,1296,11421,1423,1,0,N,N,N,CP_Drtn,TT_Task,DT_FixedDUR2,RV_OK,TK_NotStart,BEW/ST/WB4/1910,Concreting of Approch Slab A1 Side,2553,4232.5,256,81,0,324,90,81,9,0,81,,,,2016-04-12 07:00,2016-04-24 17:00,,2014-05-28 13:30,2014-06-10 13:30,2014-05-28 13:30,2014-06-10 13:30,2014-05-28 13:30,2014-06-10 13:30,,2016-04-12 07:00,2016-04-24 17:00,,PT_Normal,,,,,D05JqwEe00OS3GMLBQSoYw,A3JfsSxoo0WfUb6+cdIAYw,,,N,0,0,,,2013-11-01 17:00,2013-11-09 23:03,admin,admin
485,84393,1296,11421,1423,1,0,N,N,N,CP_Drtn,TT_Task,DT_FixedDUR2,RV_OK,TK_NotStart,BEW/ST/WB4/1950,Concreting of Approch Slab A2 Side,2553,3976.5,0,81,0,324,90,81,9,0,81,,,,2016-04-12 07:00,2016-04-24 17:00,,2014-07-08 07:30,2014-07-21 07:30,2014-07-08 07:30,2014-07-21 07:30,2014-07-08 07:30,2014-07-21 07:30,,2016-04-12 07:00,2016-04-24 17:00,,PT_Normal,,,,,ExoFEudJJE2/34B9Uek++w,EIhl+Ys4zkaJJMpeB3Js2Q,,,N,0,0,,,2013-11-01 17:00,2013-11-09 23:03,admin,admin
486,84394,1296,10999,1423,1,0,N,N,N,CP_Phys,TT_Task,DT_FixedDUR2,RV_OK,TK_NotStart,BEW/ST/PL/2070,Instalation of Test Piles  23-44,2553,4158.5,171,108,0,969,144,108,107.777778,0,143.555556,,,,2015-11-08 07:00,2015-11-24 17:00,,2014-01-02 15:30,2014-01-21 15:30,2014-01-02 15:30,2014-01-21 15:30,2014-01-02 15:30,2014-01-21 15:30,,2015-11-08 07:00,2015-11-24 17:00,,PT_Normal,,,,,qoj1N9omVEWWNspKlHrlUg,lIg3ABqf+k6MdMxq5t4VlQ,,,N,0,0,,,2013-11-01 22:32,2013-11-12 10:04,admin,admin
487,84395,1296,10999,1423,1,0,N,N,N,CP_Phys,TT_Task,DT_FixedDUR2,RV_OK,TK_NotStart,BEW/ST/PL/2110,Instalation of Test Piles No 45 to 65,2553,4743.5,837,108,0,969,144,108,107.777778,0,143.555556,,,,2016-03-23 07:00,2016-04-07 17:00,,2014-02-17 15:30,2014-03-05 15:30,2014-02-17 15:30,2014-03-05 15:30,2014-02-17 15:30,2014-03-05 15:30,,2016-03-23 07:00,2016-04-07 17:00,,PT_Normal,,,,,6R7+Dj8EoUCqDtT5kCK5Aw,lIg3ABqf+k6MdMxq5t4VlQ,,,N,0,0,,,2013-11-01 22:32,2013-11-12 10:04,admin,admin
488,84396,1296,10999,1423,1,0,N,N,N,CP_Phys,TT_Task,DT_FixedDUR2,RV_OK,TK_NotStart,BEW/ST/PL/2050,Testing the Piles 7-12,2511,3134.5,0,216,0,1620,90,216,0,0,0,,,,2015-05-11 09:00,2015-06-21 09:00,,2013-12-22 15:30,2014-01-27 15:30,2013-12-22 15:30,2014-01-27 15:30,2013-12-22 15:30,2014-01-27 15:30,,2015-05-11 09:00,2015-06-21 09:00,,PT_Normal,,,,,UIlJJy92m0C/uI2fZ+kauQ,bgh5Xbp29E++R3PkAZ1bMw,,,N,0,0,,,2013-11-01 22:40,2013-11-11 22:09,admin,admin
489,84397,1296,10999,1423,1,0,N,N,N,CP_Phys,TT_Task,DT_FixedDUR2,RV_OK,TK_NotStart,BEW/ST/PL/2090,Testing the Piles 13-18,2511,3255.5,0,216,0,1620,90,216,0,0,0,,,,2015-07-08 14:00,2015-08-12 14:00,,2014-01-27 15:30,2014-03-02 15:30,2014-01-27 15:30,2014-03-02 15:30,2014-01-27 15:30,2014-03-02 15:30,,2015-07-08 14:00,2015-08-12 14:00,,PT_Normal,,,,,fxhhZ80ipEmR6kWyp2Shkw,bgh5Xbp29E++R3PkAZ1bMw,,,N,0,0,,,2013-11-01 22:40,2013-11-11 17:01,admin,admin
490,84398,1296,10999,1423,1,0,N,N,N,CP_Phys,TT_Task,DT_FixedDUR2,RV_OK,TK_NotStart,BEW/ST/PL/2130,Testing the Piles 19-24,2511,3906.5,0,216,0,1620,90,216,0,0,0,,,,2015-11-25 07:00,2015-12-29 17:00,,2014-03-02 15:30,2014-04-03 15:30,2014-03-02 15:30,2014-04-03 15:30,2014-03-02 15:30,2014-04-03 15:30,,2015-11-25 07:00,2015-12-29 17:00,,PT_Normal,,,,,rUyVR6sGcUqDaowRlZvLWg,bgh5Xbp29E++R3PkAZ1bMw,,,N,0,0,,,2013-11-01 22:40,2013-11-11 17:01,admin,admin
491,84399,1296,10999,1423,1,0,N,N,N,CP_Phys,TT_Task,DT_FixedDUR2,RV_OK,TK_NotStart,BEW/ST/PL/2180,Testing the Piles 25-30,2511,3906.5,0,216,0,1620,90,216,0,0,0,,,,2015-12-30 07:00,2016-02-01 17:00,,2014-04-03 15:30,2014-05-07 15:30,2014-04-03 15:30,2014-05-07 15:30,2014-04-03 15:30,2014-05-07 15:30,,2015-12-30 07:00,2016-02-01 17:00,,PT_Normal,,,,,CIpWiZT4wESZyAWdCMqBDQ,HhYEoZWJSUeylRFv214v2Q,,,N,0,0,,,2013-11-01 22:45,2013-11-11 17:01,admin,admin
492,84400,1296,10999,1423,1,0,N,N,N,CP_Phys,TT_Task,DT_FixedDUR2,RV_OK,TK_NotStart,BEW/ST/PL/2250,Testing the Piles 31-36,2511,3906.5,0,216,0,1620,90,216,0,0,0,,,,2016-02-02 07:00,2016-03-06 17:00,,2014-05-07 15:30,2014-06-11 15:30,2014-05-07 15:30,2014-06-11 15:30,2014-05-07 15:30,2014-06-11 15:30,,2016-02-02 07:00,2016-03-06 17:00,,PT_Normal,,,,,ChVsBq9Q80mt3tMh1FWG4g,HhYEoZWJSUeylRFv214v2Q,,,N,0,0,,,2013-11-01 22:45,2013-11-11 17:01,admin,admin
493,84401,1296,10999,1423,1,0,N,N,N,CP_Phys,TT_Task,DT_FixedDUR2,RV_OK,TK_NotStart,BEW/ST/PL/2320,Testing the Piles 37-42,2511,3906.5,0,216,0,1620,90,216,0,0,0,,,,2016-03-07 07:00,2016-04-07 17:00,,2014-06-11 15:30,2014-07-15 15:30,2014-06-11 15:30,2014-07-15 15:30,2014-06-11 15:30,2014-07-15 15:30,,2016-03-07 07:00,2016-04-07 17:00,,PT_Normal,,,,,E+pPLEXaSUipj0aRjCLRGg,HhYEoZWJSUeylRFv214v2Q,,,N,0,0,,,2013-11-01 22:45,2013-11-11 17:01,admin,admin
494,84402,1296,10999,1423,1,0,N,N,N,CP_Phys,TT_Task,DT_FixedDUR2,RV_OK,TK_NotStart,BEW/ST/PL/2360,Testing the Piles 43-48,2511,3906.5,0,216,0,1620,90,216,0,0,0,,,,2016-04-10 07:00,2016-05-12 17:00,,2014-07-15 15:30,2014-08-25 15:30,2014-07-15 15:30,2014-08-25 15:30,2014-07-15 15:30,2014-08-25 15:30,,2016-04-10 07:00,2016-05-12 17:00,,PT_Normal,,,,,qrhHbTeGf0mek965vV6uTw,HhYEoZWJSUeylRFv214v2Q,,,N,0,0,,,2013-11-01 22:45,2013-11-11 17:01,admin,admin
495,84403,1296,10999,1423,1,0,N,N,N,CP_Phys,TT_Task,DT_FixedDUR2,RV_OK,TK_NotStart,BEW/ST/PL/2380,Testing the Piles 49-54,2511,3906.5,0,216,0,1620,90,216,0,0,0,,,,2016-05-15 07:00,2016-06-15 17:00,,2014-08-25 15:30,2014-09-28 15:30,2014-08-25 15:30,2014-09-28 15:30,2014-08-25 15:30,2014-09-28 15:30,,2016-05-15 07:00,2016-06-15 17:00,,PT_Normal,,,,,XzPGKEJClkS9k9Olf0OqXA,HhYEoZWJSUeylRFv214v2Q,,,N,0,0,,,2013-11-01 22:46,2013-11-11 17:01,admin,admin
496,84404,1296,10999,1423,1,0,N,N,N,CP_Phys,TT_Task,DT_FixedDUR2,RV_OK,TK_NotStart,BEW/ST/PL/2400,Testing the Piles 54-60,2511,3906.5,0,216,0,1620,90,216,0,0,0,,,,2016-06-16 07:00,2016-07-25 17:00,,2014-09-28 15:30,2014-11-03 16:30,2014-09-28 15:30,2014-11-03 16:30,2014-09-28 15:30,2014-11-03 16:30,,2016-06-16 07:00,2016-07-25 17:00,,PT_Normal,,,,,aSIS3FHTxUuFqA4TdcOnTw,HhYEoZWJSUeylRFv214v2Q,,,N,0,0,,,2013-11-01 22:46,2013-11-11 17:01,admin,admin
497,84405,1296,10999,1423,1,0,N,N,N,CP_Phys,TT_Task,DT_FixedDUR2,RV_OK,TK_NotStart,BEW/ST/PL/2410,Testing the Piles 60-65,2511,3906.5,0,216,0,1620,90,216,0,0,0,,,,2016-06-16 07:00,2016-07-25 17:00,,2014-09-28 15:30,2014-11-03 16:30,2014-09-28 15:30,2014-11-03 16:30,2014-09-28 15:30,2014-11-03 16:30,,2016-06-16 07:00,2016-07-25 17:00,,PT_Normal,,,,,0NSfuyGI8EqCXry+5MI91g,HhYEoZWJSUeylRFv214v2Q,,,N,0,0,,,2013-11-01 22:46,2013-11-11 17:01,admin,admin
498,84406,1296,10950,1423,1,0,N,N,N,CP_Drtn,TT_Task,DT_FixedDUR2,RV_OK,TK_NotStart,BEW/UT/INI/1040,Submission of Request for protection Ch 129,,6030.5,0,63,0,0,0,63,0,0,0,,,,2016-06-15 07:00,2016-06-23 17:00,,2013-10-14 16:30,2013-10-27 15:30,2013-10-14 16:30,2013-10-27 15:30,2013-10-14 16:30,2013-10-27 15:30,,2016-06-15 07:00,2016-06-23 17:00,,PT_Normal,,,,,UfwIqpRcFE+fWvebzJ7G+A,,,,N,0,0,,,2013-11-02 10:15,2013-11-11 14:28,admin,admin
499,84407,1296,10950,1423,1,0,N,N,N,CP_Drtn,TT_Task,DT_FixedDUR2,RV_OK,TK_NotStart,BEW/UT/INI/1000,Identifying and Marking of 33 KV line at Ch 129+000,2511,6030.5,0,63,0,63,63,63,0,0,0,,,,2016-06-06 07:00,2016-06-14 17:00,,2013-10-03 16:30,2013-10-14 16:30,2013-10-03 16:30,2013-10-14 16:30,2013-10-03 16:30,2013-10-14 16:30,,2016-06-06 07:00,2016-06-14 17:00,,PT_Normal,,,,,xO7mvOUIm0erpOjliee/jg,,,,N,0,0,,,2013-11-02 10:23,2013-11-12 18:20,admin,admin
500,84408,1296,10950,1423,1,0,N,N,N,CP_Drtn,TT_Task,DT_FixedDUR2,RV_OK,TK_NotStart,BEW/UT/INI/1080,Approval of Protection Ch 129,,6030.5,0,189,0,0,0,189,0,0,0,,,,2016-06-26 07:00,2016-07-28 17:00,,2013-10-27 15:30,2013-11-27 15:30,2013-10-27 15:30,2013-11-27 15:30,2013-10-27 15:30,2013-11-27 15:30,,2016-06-26 07:00,2016-07-28 17:00,,PT_Normal,,,,,UNOSXn/+fECjKq7Q6nEI2A,,,,N,0,0,,,2013-11-02 10:26,2013-11-11 14:28,admin,admin
501,84409,1296,10950,1423,1,0,N,N,N,CP_Drtn,TT_Task,DT_FixedDUR2,RV_OK,TK_NotStart,BEW/UT/INI/1120,Providing protection of 33 Line ch 129,2511,6030.5,6030.5,189,0,189,72,189,0,0,0,,,,2016-07-31 07:00,2016-08-28 17:00,,2013-11-27 15:30,2013-12-26 15:30,2013-11-27 15:30,2013-12-26 15:30,2013-11-27 15:30,2013-12-26 15:30,,2016-07-31 07:00,2016-08-28 17:00,,PT_Normal,,,,,W/yQfPlJP0CYb11RJN5DZA,,,,N,0,0,,,2013-11-02 10:27,2013-11-12 18:21,admin,admin
502,84410,1296,10950,1423,1,0,N,N,N,CP_Drtn,TT_Task,DT_FixedDUR2,RV_OK,TK_NotStart,BEW/UT/INI/1050,Submission of Request for protection ch 108,,6030.5,0,63,0,0,0,63,0,0,0,,,,2016-06-15 07:00,2016-06-23 17:00,,2013-10-14 16:30,2013-10-27 15:30,2013-10-14 16:30,2013-10-27 15:30,2013-10-14 16:30,2013-10-27 15:30,,2016-06-15 07:00,2016-06-23 17:00,,PT_Normal,,,,,nSoQosFSsEq9S8b0+lQYXw,fSWFWGl7IU+z9xcS4dwJew,,,N,0,0,,,2013-11-02 10:31,2013-11-12 11:04,admin,admin
503,84411,1296,10950,1423,1,0,N,N,N,CP_Drtn,TT_Task,DT_FixedDUR2,RV_OK,TK_NotStart,BEW/UT/INI/1010,Identifying and Marking of 11 KV line at Ch 108+000,2511,6030.5,0,63,0,63,63,63,0,0,0,,,,2016-06-06 07:00,2016-06-14 17:00,,2013-10-03 16:30,2013-10-14 16:30,2013-10-03 16:30,2013-10-14 16:30,2013-10-03 16:30,2013-10-14 16:30,,2016-06-06 07:00,2016-06-14 17:00,,PT_Normal,,,,,gjyGVA6d80i3xL9RfSLq8A,XG7fy6dipkmNGaNkhCO2oA,,,N,0,0,,,2013-11-02 10:31,2013-11-12 18:20,admin,admin
504,84412,1296,10950,1423,1,0,N,N,N,CP_Drtn,TT_Task,DT_FixedDUR2,RV_OK,TK_NotStart,BEW/UT/INI/1090,Approval of Protection at Ch 108,,6030.5,0,189,0,0,0,189,0,0,0,,,,2016-06-26 07:00,2016-07-28 17:00,,2013-10-27 15:30,2013-11-27 15:30,2013-10-27 15:30,2013-11-27 15:30,2013-10-27 15:30,2013-11-27 15:30,,2016-06-26 07:00,2016-07-28 17:00,,PT_Normal,,,,,xOvi5pd4K06McFWhU37iOQ,wYkqvhFbMkm3h/0zp8bSGw,,,N,0,0,,,2013-11-02 10:31,2013-11-12 11:04,admin,admin
505,84413,1296,10950,1423,1,0,N,N,N,CP_Drtn,TT_Task,DT_FixedDUR2,RV_OK,TK_NotStart,BEW/UT/INI/1130,Providing Relocation and protection of 11 KV Line Ch 108,2511,6030.5,6030.5,189,0,189,72,189,0,0,0,,,,2016-07-31 07:00,2016-08-28 17:00,,2013-11-27 15:30,2013-12-26 15:30,2013-11-27 15:30,2013-12-26 15:30,2013-11-27 15:30,2013-12-26 15:30,,2016-07-31 07:00,2016-08-28 17:00,,PT_Normal,,,,,QtdrmMZ4lke7K8tZHYZ79A,g2/1GzN4ZkOJkYFn3eOHRA,,,N,0,0,,,2013-11-02 10:31,2013-11-12 18:21,admin,admin
506,84414,1296,10950,1423,1,0,N,N,N,CP_Drtn,TT_Task,DT_FixedDUR2,RV_OK,TK_NotStart,BEW/UT/INI/1060,Submission of Request for protection Ch 117,,6030.5,0,63,0,0,0,63,0,0,0,,,,2016-06-15 07:00,2016-06-23 17:00,,2013-10-14 16:30,2013-10-27 15:30,2013-10-14 16:30,2013-10-27 15:30,2013-10-14 16:30,2013-10-27 15:30,,2016-06-15 07:00,2016-06-23 17:00,,PT_Normal,,,,,pPXSjc+fjkWaRwLyWrcNWQ,fSWFWGl7IU+z9xcS4dwJew,,,N,0,0,,,2013-11-02 10:52,2013-11-11 14:24,admin,admin
507,84415,1296,10950,1423,1,0,N,N,N,CP_Drtn,TT_Task,DT_FixedDUR2,RV_OK,TK_NotStart,BEW/UT/INI/1020,Identifying and Marking of 11 KV line at Ch 117,2511,6030.5,0,63,0,63,63,63,0,0,0,,,,2016-06-06 07:00,2016-06-14 17:00,,2013-10-03 16:30,2013-10-14 16:30,2013-10-03 16:30,2013-10-14 16:30,2013-10-03 16:30,2013-10-14 16:30,,2016-06-06 07:00,2016-06-14 17:00,,PT_Normal,,,,,SVzVImaSqkGXDBAcR9PBxw,XG7fy6dipkmNGaNkhCO2oA,,,N,0,0,,,2013-11-02 10:52,2013-11-12 18:20,admin,admin
508,84416,1296,10950,1423,1,0,N,N,N,CP_Drtn,TT_Task,DT_FixedDUR2,RV_OK,TK_NotStart,BEW/UT/INI/1100,Approval of Protection Ch 117,,6030.5,0,189,0,0,0,189,0,0,0,,,,2016-06-26 07:00,2016-07-28 17:00,,2013-10-27 15:30,2013-11-27 15:30,2013-10-27 15:30,2013-11-27 15:30,2013-10-27 15:30,2013-11-27 15:30,,2016-06-26 07:00,2016-07-28 17:00,,PT_Normal,,,,,4+4zj4CJPk+bd2E81zl4TQ,wYkqvhFbMkm3h/0zp8bSGw,,,N,0,0,,,2013-11-02 10:52,2013-11-11 14:24,admin,admin
509,84417,1296,10950,1423,1,0,N,N,N,CP_Drtn,TT_Task,DT_FixedDUR2,RV_OK,TK_NotStart,BEW/UT/INI/1140,Providing protection of 11kv Line ch 117,2511,6030.5,6030.5,189,0,189,72,189,0,0,0,,,,2016-07-31 07:00,2016-08-28 17:00,,2013-11-27 15:30,2013-12-26 15:30,2013-11-27 15:30,2013-12-26 15:30,2013-11-27 15:30,2013-12-26 15:30,,2016-07-31 07:00,2016-08-28 17:00,,PT_Normal,,,,,Y4Uu+BkHhU+Y5DKT7vM+hQ,g2/1GzN4ZkOJkYFn3eOHRA,,,N,0,0,,,2013-11-02 10:52,2013-11-12 18:22,admin,admin
510,84418,1296,10950,1423,1,0,N,N,N,CP_Drtn,TT_Task,DT_FixedDUR2,RV_OK,TK_NotStart,BEW/UT/INI/1070,Submission of Request for protection of Telephone,,6030.5,0,63,0,0,0,63,0,0,0,,,,2016-06-15 07:00,2016-06-23 17:00,,2013-10-14 16:30,2013-10-27 15:30,2013-10-14 16:30,2013-10-27 15:30,2013-10-14 16:30,2013-10-27 15:30,,2016-06-15 07:00,2016-06-23 17:00,,PT_Normal,,,,,qKahWsTn+UGf1ptr/HNzHQ,fSWFWGl7IU+z9xcS4dwJew,,,N,0,0,,,2013-11-02 11:00,2013-11-11 14:24,admin,admin
511,84419,1296,10950,1423,1,0,N,N,N,CP_Drtn,TT_Task,DT_FixedDUR2,RV_OK,TK_NotStart,BEW/UT/INI/1030,Identifying and Marking of Telephone line,2511,6030.5,0,63,0,63,63,63,0,0,0,,,,2016-06-06 07:00,2016-06-14 17:00,,2013-10-03 16:30,2013-10-14 16:30,2013-10-03 16:30,2013-10-14 16:30,2013-10-03 16:30,2013-10-14 16:30,,2016-06-06 07:00,2016-06-14 17:00,,PT_Normal,,,,,/6t5ut59e0mcFunLScbnvg,XG7fy6dipkmNGaNkhCO2oA,,,N,0,0,,,2013-11-02 11:00,2013-11-12 18:20,admin,admin
512,84420,1296,10950,1423,1,0,N,N,N,CP_Drtn,TT_Task,DT_FixedDUR2,RV_OK,TK_NotStart,BEW/UT/INI/1110,Approval of Protection Telephone line,,6030.5,0,189,0,0,0,189,0,0,0,,,,2016-06-26 07:00,2016-07-28 17:00,,2013-10-27 15:30,2013-11-27 15:30,2013-10-27 15:30,2013-11-27 15:30,2013-10-27 15:30,2013-11-27 15:30,,2016-06-26 07:00,2016-07-28 17:00,,PT_Normal,,,,,v8sZtlQ5F0GQSod6ix9n7Q,wYkqvhFbMkm3h/0zp8bSGw,,,N,0,0,,,2013-11-02 11:00,2013-11-11 14:24,admin,admin
513,84421,1296,10950,1423,1,0,N,N,N,CP_Drtn,TT_Task,DT_FixedDUR2,RV_OK,TK_NotStart,BEW/UT/INI/1150,Providing protection of Telephone Line,2511,6030.5,6030.5,189,0,189,189,189,0,0,0,,,,2016-07-31 07:00,2016-08-28 17:00,,2013-11-27 15:30,2013-12-26 15:30,2013-11-27 15:30,2013-12-26 15:30,2013-11-27 15:30,2013-12-26 15:30,,2016-07-31 07:00,2016-08-28 17:00,,PT_Normal,,,,,Q1GBe+aSC0isRauveq2t3Q,g2/1GzN4ZkOJkYFn3eOHRA,,,N,0,0,,,2013-11-02 11:00,2013-11-12 18:21,admin,admin
514,84422,1296,10979,1423,1,0,N,N,N,CP_Phys,TT_Task,DT_FixedDUR2,RV_OK,TK_NotStart,BEW/DE/DS/1180,Survey Phase 3 OGL 95+300 to 100+000,,4104.5,0,90,0,0,0,90,0,0,0,,,,2015-08-05 07:00,2015-08-18 17:00,,2013-10-03 16:30,2013-10-21 15:30,2013-10-03 16:30,2013-10-21 15:30,2013-10-03 16:30,2013-10-21 15:30,,2015-08-05 07:00,2015-08-18 17:00,,PT_Normal,,,,,Evpif2S+sk+bIbKUwx4y5g,m2IrP0AAjkCL+YcFjcad0w,,,N,0,0,,,2013-11-02 11:27,2013-11-12 11:12,admin,admin
515,84423,1296,10979,1423,1,0,N,N,N,CP_Phys,TT_Task,DT_FixedDUR2,RV_OK,TK_NotStart,BEW/DE/DS/1220,Survey Phase 4 OGL 100+000 to 105+000,,4104.5,0,90,0,0,0,90,0,0,0,,,,2015-08-19 07:00,2015-09-01 17:00,,2013-10-21 15:30,2013-11-04 15:30,2013-10-21 15:30,2013-11-04 15:30,2013-10-21 15:30,2013-11-04 15:30,,2015-08-19 07:00,2015-09-01 17:00,,PT_Normal,,,,,LTNR6ULK20ymTOy/XJpfzQ,4mL7ue/IHUCUaagI1EamGw,,,N,0,0,,,2013-11-02 11:31,2013-11-12 11:12,admin,admin
516,84424,1296,10979,1423,1,0,N,N,N,CP_Phys,TT_Task,DT_FixedDUR2,RV_OK,TK_NotStart,BEW/DE/DS/1240,Survey Phase 5 OGL 105+000 to 110+000,,4104.5,0,90,0,0,0,90,0,0,0,,,,2015-09-02 07:00,2015-09-15 17:00,,2013-11-04 15:30,2013-11-20 15:30,2013-11-04 15:30,2013-11-20 15:30,2013-11-04 15:30,2013-11-20 15:30,,2015-09-02 07:00,2015-09-15 17:00,,PT_Normal,,,,,WzhGam4UE0uYijmy09ZW0A,4mL7ue/IHUCUaagI1EamGw,,,N,0,0,,,2013-11-02 11:31,2013-11-12 11:12,admin,admin
517,84425,1296,10979,1423,1,0,N,N,N,CP_Phys,TT_Task,DT_FixedDUR2,RV_OK,TK_NotStart,BEW/DE/DS/1250,Survey Phase 6 OGL 110+000 to 115+000,,4104.5,0,90,0,0,0,90,0,0,0,,,,2015-09-16 07:00,2015-09-29 17:00,,2013-11-20 15:30,2013-12-04 15:30,2013-11-20 15:30,2013-12-04 15:30,2013-11-20 15:30,2013-12-04 15:30,,2015-09-16 07:00,2015-09-29 17:00,,PT_Normal,,,,,T/YpmgexbkOCxmeveuJ+Bw,4mL7ue/IHUCUaagI1EamGw,,,N,0,0,,,2013-11-02 11:31,2013-11-12 11:12,admin,admin
518,84426,1296,10979,1423,1,0,N,N,N,CP_Phys,TT_Task,DT_FixedDUR2,RV_OK,TK_NotStart,BEW/DE/DS/1260,Survey Phase 7 OGL 115+000 to 120+000,,4104.5,0,90,0,0,0,90,0,0,0,,,,2015-09-30 07:00,2015-10-13 17:00,,2013-12-04 15:30,2013-12-18 15:30,2013-12-04 15:30,2013-12-18 15:30,2013-12-04 15:30,2013-12-18 15:30,,2015-09-30 07:00,2015-10-13 17:00,,PT_Normal,,,,,lCyF5TM0y0G5f2PxsyOTOQ,4mL7ue/IHUCUaagI1EamGw,,,N,0,0,,,2013-11-02 11:31,2013-11-12 11:12,admin,admin
519,84427,1296,10979,1423,1,0,N,N,N,CP_Phys,TT_Task,DT_FixedDUR2,RV_OK,TK_NotStart,BEW/DE/DS/1270,Survey Phase 8 OGL 120+000 to 125+000,,4104.5,0,90,0,0,0,90,0,0,0,,,,2015-10-15 07:00,2015-10-28 17:00,,2013-12-18 15:30,2014-01-02 15:30,2013-12-18 15:30,2014-01-02 15:30,2013-12-18 15:30,2014-01-02 15:30,,2015-10-15 07:00,2015-10-28 17:00,,PT_Normal,,,,,6nBUf+YquUKr2k4IkdgRlA,75LFLV26Y06HWb00bGiPWw,,,N,0,0,,,2013-11-02 11:35,2013-11-12 11:12,admin,admin
520,84428,1296,10979,1423,1,0,N,N,N,CP_Phys,TT_Task,DT_FixedDUR2,RV_OK,TK_NotStart,BEW/DE/DS/1280,Survey Phase 9 OGL 125+000 to 130+000,,5391.5,0,90,0,0,0,90,0,0,0,,,,2016-05-22 07:00,2016-06-02 17:00,,2014-01-02 15:30,2014-01-19 15:30,2014-01-02 15:30,2014-01-19 15:30,2014-01-02 15:30,2014-01-19 15:30,,2016-05-22 07:00,2016-06-02 17:00,,PT_Normal,,,,,OJ/lVBaQUE6CU54BjVPOYQ,BYogG/Eo2U+qlHN09H5C7g,,,N,0,0,,,2013-11-02 11:35,2013-11-12 11:12,admin,admin
521,84443,1296,11151,1423,1,0,N,N,N,CP_Phys,TT_Task,DT_FixedDUR2,RV_OK,TK_NotStart,BEW/RD1/EW/2020,Asphalt Removal,,4635.5,0,18,0,0,0,18,2,0,2,,,,2016-02-18 07:00,2016-02-21 17:00,,2014-01-30 15:30,2014-02-03 15:30,2014-01-30 15:30,2014-02-03 15:30,2014-01-30 15:30,2014-02-03 15:30,,2016-02-18 07:00,2016-02-21 17:00,,PT_Normal,,,,,RBQbugQjH02wpphG56NDDg,OabVgjJMHEi3XcVsbIT5jA,,,N,0,0,,,2013-11-03 15:27,2013-11-12 11:04,admin,admin
522,84444,1296,11151,1423,1,0,N,N,N,CP_Phys,TT_Task,DT_FixedDUR2,RV_OK,TK_NotStart,BEW/RD1/EW/2030,Removal of Interlock,,4635.5,0,18,0,0,0,18,0,0,0,,,,2016-02-18 07:00,2016-02-21 17:00,,2014-01-30 15:30,2014-02-03 15:30,2014-01-30 15:30,2014-02-03 15:30,2014-01-30 15:30,2014-02-03 15:30,,2016-02-18 07:00,2016-02-21 17:00,,PT_Normal,,,,,CeEM6MkmFUOgKuRDPjeiKA,M/9yKNhl4UaInfnG1ocOZg,,,N,0,0,,,2013-11-03 15:27,2013-11-12 11:04,admin,admin
523,84445,1296,11151,1423,1,0,N,N,N,CP_Phys,TT_Task,DT_FixedDUR2,RV_OK,TK_NotStart,BEW/RD1/EW/2040,Removal of Kerb,,4635.5,0,18,0,0,0,18,0,0,0,,,,2016-02-18 07:00,2016-02-21 17:00,,2014-01-30 15:30,2014-02-03 15:30,2014-01-30 15:30,2014-02-03 15:30,2014-01-30 15:30,2014-02-03 15:30,,2016-02-18 07:00,2016-02-21 17:00,,PT_Normal,,,,,E7VA1Za1VUa5up3EbZ/78Q,OubgGpyx+kuUcLEEvoD7gg,,,N,0,0,,,2013-11-03 15:27,2013-11-12 11:04,admin,admin
524,84446,1296,11151,1423,1,0,N,N,N,CP_Phys,TT_Task,DT_FixedDUR2,RV_OK,TK_NotStart,BEW/RD1/EW/2050,Removal of Sign Boards,,4635.5,0,18,0,0,0,18,0,0,0,,,,2016-02-18 07:00,2016-02-21 17:00,,2014-01-30 15:30,2014-02-03 15:30,2014-01-30 15:30,2014-02-03 15:30,2014-01-30 15:30,2014-02-03 15:30,,2016-02-18 07:00,2016-02-21 17:00,,PT_Normal,,,,,27kwS37F70WtEi1WZ+ClSg,b+l0orQNyU2PdkrJe0Zx2A,,,N,0,0,,,2013-11-03 15:27,2013-11-12 11:04,admin,admin
525,84447,1296,11151,1423,1,0,N,N,N,CP_Phys,TT_Task,DT_FixedDUR2,RV_OK,TK_NotStart,BEW/RD1/EW/2060,Clearing & Grubbing,2511,4635.5,0,18,0,2,18,18,2,0,2,,,,2016-02-22 07:00,2016-02-23 17:00,,2014-02-03 15:30,2014-02-05 15:30,2014-02-03 15:30,2014-02-05 15:30,2014-02-03 15:30,2014-02-05 15:30,,2016-02-22 07:00,2016-02-23 17:00,,PT_Normal,,,,,XKox4kUYGEyVk4Jusk10AQ,2MQIPx+63UGtYQhei1uA8Q,,,N,0,0,,,2013-11-03 15:27,2013-11-12 11:04,admin,admin
526,84448,1296,11151,1423,1,0,N,N,N,CP_Phys,TT_Task,DT_FixedDUR2,RV_OK,TK_NotStart,BEW/RD1/EW/2070,Excavation,2511,4635.5,0,180,0,20,15,180,243,0,60,,,,2016-02-24 07:00,2016-03-22 17:00,,2014-02-05 15:30,2014-03-05 15:30,2014-02-05 15:30,2014-03-05 15:30,2014-02-05 15:30,2014-03-05 15:30,,2016-02-24 07:00,2016-03-22 17:00,,PT_Normal,,,,,loEEjugak0WCwEtOLNafFQ,82wutzirBEaAeqN9thavbg,,,N,0,0,,,2013-11-03 15:27,2013-11-12 11:04,admin,admin
527,84449,1296,11151,1423,1,0,N,N,N,CP_Phys,TT_Task,DT_FixedDUR2,RV_OK,TK_NotStart,BEW/RD1/EW/2080,Embankment Filling upto GSB Bottom,2511,4635.5,0,135,0,28,28,135,455,0,168,,,,2016-03-23 07:00,2016-04-12 17:00,,2014-03-05 15:30,2014-03-26 15:30,2014-03-05 15:30,2014-03-26 15:30,2014-03-05 15:30,2014-03-26 15:30,,2016-03-23 07:00,2016-04-12 17:00,,PT_Normal,,,,,DlYuRE0SkEqpVoz/J2I4Wg,W06lEEXX0Eqe/Lq9u5/XEw,,,N,0,0,,,2013-11-03 15:27,2013-11-12 11:04,admin,admin
528,84450,1296,11151,1423,1,0,N,N,N,CP_Phys,TT_Task,DT_FixedDUR2,RV_OK,TK_NotStart,BEW/RD1/EW/2090,Granular Sub Base,2511,4635.5,0,63,0,7,54,63,142,0,35,,,,2016-04-13 07:00,2016-04-21 17:00,,2014-03-26 15:30,2014-04-06 15:30,2014-03-26 15:30,2014-04-06 15:30,2014-03-26 15:30,2014-04-06 15:30,,2016-04-13 07:00,2016-04-21 17:00,,PT_Normal,,,,,u6MZQu4Yzkej6G/l0LmCCA,rU9Ornw4RE+zrUl6hl6iJA,,,N,0,0,,,2013-11-03 15:27,2013-11-12 11:04,admin,admin
529,84451,1296,11151,1423,1,0,N,N,N,CP_Phys,TT_Task,DT_FixedDUR2,RV_OK,TK_NotStart,BEW/RD1/EW/2100,Kerb PCC,2511,4635.5,0,54,0,6,36,54,0,0,0,,,,2016-04-24 07:00,2016-05-01 17:00,,2014-04-06 15:30,2014-04-14 15:30,2014-04-06 15:30,2014-04-14 15:30,2014-04-06 15:30,2014-04-14 15:30,,2016-04-24 07:00,2016-05-01 17:00,,PT_Normal,,,,,LKUA1kToyU+mPgC4KB2RIA,/JPtX7URikSJXhZ6hPojyg,,,N,0,0,,,2013-11-03 15:27,2013-11-12 11:04,admin,admin
530,84452,1296,11151,1423,1,0,N,N,N,CP_Phys,TT_Task,DT_FixedDUR2,RV_OK,TK_NotStart,BEW/RD1/EW/2130,Kerbstone,2511,4635.5,0,54,0,6,36,54,0,0,0,,,,2016-05-02 07:00,2016-05-10 17:00,,2014-04-14 15:30,2014-04-22 15:30,2014-04-14 15:30,2014-04-22 15:30,2014-04-14 15:30,2014-04-22 15:30,,2016-05-02 07:00,2016-05-10 17:00,,PT_Normal,,,,,Gp4AN4eNIEurhYtIKL1BIA,G1EB1BC3TkyVQOHLflTq9A,,,N,0,0,,,2013-11-03 15:27,2013-11-12 11:04,admin,admin
531,84453,1296,11151,1423,1,0,N,N,N,CP_Phys,TT_Task,DT_FixedDUR2,RV_OK,TK_NotStart,BEW/RD1/EW/2140,Haunch,2511,4635.5,0,54,0,6,36,54,0,0,0,,,,2016-05-11 07:00,2016-05-18 17:00,,2014-04-22 15:30,2014-04-30 15:30,2014-04-22 15:30,2014-04-30 15:30,2014-04-22 15:30,2014-04-30 15:30,,2016-05-11 07:00,2016-05-18 17:00,,PT_Normal,,,,,jAhU6+p5VkOcHqHaPvqt3Q,NaZWZClpREOSoJpbBF3FCg,,,N,0,0,,,2013-11-03 15:27,2013-11-12 11:04,admin,admin
532,84454,1296,11151,1423,1,0,N,N,N,CP_Phys,TT_Task,DT_FixedDUR2,RV_OK,TK_NotStart,BEW/RD1/EW/2110,Ducting,2511,4743.5,108,54,0,6,6,54,0,0,0,,,,2016-05-11 07:00,2016-05-18 17:00,,2014-04-06 15:30,2014-04-14 15:30,2014-04-06 15:30,2014-04-14 15:30,2014-04-06 15:30,2014-04-14 15:30,,2016-05-11 07:00,2016-05-18 17:00,,PT_Normal,,,,,jTAxGVOFxESyYNNc+5Z07A,gCdWEFvYREe7D4+tsPMc8Q,,,N,0,0,,,2013-11-03 15:27,2013-11-12 11:04,admin,admin
533,84455,1296,11151,1423,1,0,N,N,N,CP_Phys,TT_Task,DT_FixedDUR2,RV_OK,TK_NotStart,BEW/RD1/EW/2120,Catch pit and HDPE Pipe Laying,2511,4743.5,108,54,0,6,54,54,0,0,0,,,,2016-05-11 07:00,2016-05-18 17:00,,2014-04-06 15:30,2014-04-14 15:30,2014-04-06 15:30,2014-04-14 15:30,2014-04-06 15:30,2014-04-14 15:30,,2016-05-11 07:00,2016-05-18 17:00,,PT_Normal,,,,,IEj62hIAoEmKSL8/XOmgKg,LRR1JVSqgke9nbxKDy+fTQ,,,N,0,0,,,2013-11-03 15:27,2013-11-12 11:04,admin,admin
534,84456,1296,11151,1423,1,0,N,N,N,CP_Phys,TT_Task,DT_FixedDUR2,RV_OK,TK_NotStart,BEW/RD1/EW/2150,GSB Bed Finalisation,2511,4635.5,0,27,0,3,54,27,73,0,15,,,,2016-05-19 07:00,2016-05-23 17:00,,2014-04-30 15:30,2014-05-05 15:30,2014-04-30 15:30,2014-05-05 15:30,2014-04-30 15:30,2014-05-05 15:30,,2016-05-19 07:00,2016-05-23 17:00,,PT_Normal,,,,,2Fgb7OVjjkO9y4wLbcN2Rw,xKKqLpUZXUiJMGKpiWjWsg,,,N,0,0,,,2013-11-03 15:27,2013-11-12 11:04,admin,admin
535,84471,1296,11112,1423,1,0,N,N,N,CP_Phys,TT_Task,DT_FixedDUR2,RV_OK,TK_NotStart,BEW/RD1/EW/1640,Asphalt Removal,,4095.5,0,18,0,0,0,18,2,0,2,,,,2015-12-27 07:00,2015-12-28 17:00,,2014-03-02 15:30,2014-03-04 15:30,2014-03-02 15:30,2014-03-04 15:30,2014-03-02 15:30,2014-03-04 15:30,,2015-12-27 07:00,2015-12-28 17:00,,PT_Normal,,,,,SfcJ4WsKMUG1PLc8ZjDEbg,/wp2H1UEhUOgcM7dY4ymaw,,,N,0,0,,,2013-11-03 15:37,2013-11-11 22:55,admin,admin
536,84472,1296,11112,1423,1,0,N,N,N,CP_Phys,TT_Task,DT_FixedDUR2,RV_OK,TK_NotStart,BEW/RD1/EW/1650,Removal of Interlock,,4095.5,0,18,0,0,0,18,0,0,0,,,,2015-12-27 07:00,2015-12-28 17:00,,2014-03-02 15:30,2014-03-04 15:30,2014-03-02 15:30,2014-03-04 15:30,2014-03-02 15:30,2014-03-04 15:30,,2015-12-27 07:00,2015-12-28 17:00,,PT_Normal,,,,,RiBKMMLGQU+12Kb79VXsew,mWdFhDf6JE2pGg+0Uy9hqg,,,N,0,0,,,2013-11-03 15:37,2013-11-11 23:04,admin,admin
537,84473,1296,11112,1423,1,0,N,N,N,CP_Phys,TT_Task,DT_FixedDUR2,RV_OK,TK_NotStart,BEW/RD1/EW/1660,Removal of Kerb,,4095.5,0,18,0,0,0,18,0,0,0,,,,2015-12-27 07:00,2015-12-28 17:00,,2014-03-02 15:30,2014-03-04 15:30,2014-03-02 15:30,2014-03-04 15:30,2014-03-02 15:30,2014-03-04 15:30,,2015-12-27 07:00,2015-12-28 17:00,,PT_Normal,,,,,r2DhCHM8fE60jtB5U8o3dw,CHCY+i8mYUitvp8AYy8Qyw,,,N,0,0,,,2013-11-03 15:37,2013-11-11 23:04,admin,admin
538,84474,1296,11112,1423,1,0,N,N,N,CP_Phys,TT_Task,DT_FixedDUR2,RV_OK,TK_NotStart,BEW/RD1/EW/1670,Removal of Sign Boards,,4095.5,0,18,0,0,0,18,0,0,0,,,,2015-12-27 07:00,2015-12-28 17:00,,2014-03-02 15:30,2014-03-04 15:30,2014-03-02 15:30,2014-03-04 15:30,2014-03-02 15:30,2014-03-04 15:30,,2015-12-27 07:00,2015-12-28 17:00,,PT_Normal,,,,,FzVTUev3sUu+JoSAJFzH0A,B3rCn1/6oUGTyag3jGPD1w,,,N,0,0,,,2013-11-03 15:37,2013-11-11 23:04,admin,admin
539,84475,1296,11112,1423,1,0,N,N,N,CP_Phys,TT_Task,DT_FixedDUR2,RV_OK,TK_NotStart,BEW/RD1/EW/1730,Clearing & Grubbing,2511,4095.5,0,18,0,2,18,18,2,0,2,,,,2015-12-29 07:00,2015-12-30 17:00,,2014-03-04 15:30,2014-03-06 15:30,2014-03-04 15:30,2014-03-06 15:30,2014-03-04 15:30,2014-03-06 15:30,,2015-12-29 07:00,2015-12-30 17:00,,PT_Normal,,,,,VX9j9ApgzkS5WHTHjsPTeQ,VKJkZR3NN0maJsFQgKB9Xw,,,N,0,0,,,2013-11-03 15:37,2013-11-11 22:58,admin,admin
540,84476,1296,11112,1423,1,0,N,N,N,CP_Phys,TT_Task,DT_FixedDUR2,RV_OK,TK_NotStart,BEW/RD1/EW/1760,Excavation,2511,4095.5,0,171,0,20,15,171,243,0,60,,,,2015-12-31 07:00,2016-01-26 17:00,,2014-03-06 15:30,2014-04-02 15:30,2014-03-06 15:30,2014-04-02 15:30,2014-03-06 15:30,2014-04-02 15:30,,2015-12-31 07:00,2016-01-26 17:00,,PT_Normal,,,,,FK4S2svD6EKZD5utNd/YDA,oY7wzAi2N0qLtgQHbKYUvg,,,N,0,0,,,2013-11-03 15:37,2013-11-12 09:53,admin,admin
541,84477,1296,11112,1423,1,0,N,N,N,CP_Phys,TT_Task,DT_FixedDUR2,RV_OK,TK_NotStart,BEW/RD1/EW/1790,Embankment Filling upto GSB Bottom,2511,4095.5,0,252,0,28,28,252,455,0,168,,,,2016-01-27 07:00,2016-03-06 17:00,,2014-04-02 15:30,2014-05-12 15:30,2014-04-02 15:30,2014-05-12 15:30,2014-04-02 15:30,2014-05-12 15:30,,2016-01-27 07:00,2016-03-06 17:00,,PT_Normal,,,,,TXTvo/yzk0+sNX/+069uZg,l4T+tr18GkaiahdDBej5dg,,,N,0,0,,,2013-11-03 15:37,2013-11-12 09:53,admin,admin
542,84478,1296,11112,1423,1,0,N,N,N,CP_Phys,TT_Task,DT_FixedDUR2,RV_OK,TK_NotStart,BEW/RD1/EW/1820,Granular Sub Base,2511,4095.5,0,63,0,7,54,63,142,0,35,,,,2016-03-07 07:00,2016-03-15 17:00,,2014-05-12 15:30,2014-05-21 15:30,2014-05-12 15:30,2014-05-21 15:30,2014-05-12 15:30,2014-05-21 15:30,,2016-03-07 07:00,2016-03-15 17:00,,PT_Normal,,,,,/7+Gry2KsESHyaGheRjzxg,coWsu7CLWUCvo5MX4GnIRg,,,N,0,0,,,2013-11-03 15:37,2013-11-12 11:04,admin,admin
543,84479,1296,11112,1423,1,0,N,N,N,CP_Phys,TT_Task,DT_FixedDUR2,RV_OK,TK_NotStart,BEW/RD1/EW/1870,Kerb PCC,2511,4095.5,0,54,0,6,36,54,0,0,0,,,,2016-03-16 07:00,2016-03-23 17:00,,2014-05-21 15:30,2014-06-01 15:30,2014-05-21 15:30,2014-06-01 15:30,2014-05-21 15:30,2014-06-01 15:30,,2016-03-16 07:00,2016-03-23 17:00,,PT_Normal,,,,,jdWxRRbg60OJGZDTZ5kGAg,J99nR8+ZYUiMiScj7pnBaA,,,N,0,0,,,2013-11-03 15:37,2013-11-12 11:04,admin,admin
544,84480,1296,11112,1423,1,0,N,N,N,CP_Phys,TT_Task,DT_FixedDUR2,RV_OK,TK_NotStart,BEW/RD1/EW/1940,Kerbstone,2511,4095.5,0,54,0,6,36,54,0,0,0,,,,2016-03-24 07:00,2016-03-31 17:00,,2014-06-01 15:30,2014-06-09 15:30,2014-06-01 15:30,2014-06-09 15:30,2014-06-01 15:30,2014-06-09 15:30,,2016-03-24 07:00,2016-03-31 17:00,,PT_Normal,,,,,RCyxOLMVDkKMkjBS6Il02w,0hpDN6fecE6xcr5eVql/Fg,,,N,0,0,,,2013-11-03 15:37,2013-11-12 11:04,admin,admin
545,84481,1296,11112,1423,1,0,N,N,N,CP_Phys,TT_Task,DT_FixedDUR2,RV_OK,TK_NotStart,BEW/RD1/EW/1970,Haunch,2511,4095.5,0,54,0,6,36,54,0,0,0,,,,2016-04-03 07:00,2016-04-10 17:00,,2014-06-09 15:30,2014-06-17 15:30,2014-06-09 15:30,2014-06-17 15:30,2014-06-09 15:30,2014-06-17 15:30,,2016-04-03 07:00,2016-04-10 17:00,,PT_Normal,,,,,p7jukRFrQ0+noDT5pCTcfA,yDMclJqMwkWv1lXQPbzA7Q,,,N,0,0,,,2013-11-03 15:37,2013-11-12 11:04,admin,admin
546,84482,1296,11112,1423,1,0,N,N,N,CP_Phys,TT_Task,DT_FixedDUR2,RV_OK,TK_NotStart,BEW/RD1/EW/1880,Ducting,2511,4203.5,108,54,0,6,6,54,0,0,0,,,,2016-04-03 07:00,2016-04-10 17:00,,2014-05-21 15:30,2014-06-01 15:30,2014-05-21 15:30,2014-06-01 15:30,2014-05-21 15:30,2014-06-01 15:30,,2016-04-03 07:00,2016-04-10 17:00,,PT_Normal,,,,,oA+JXNLWJEemGPnul5VbRw,+Y8rIjUmCEG4XXAW0kvOSA,,,N,0,0,,,2013-11-03 15:37,2013-11-12 11:04,admin,admin
547,84483,1296,11112,1423,1,0,N,N,N,CP_Phys,TT_Task,DT_FixedDUR2,RV_OK,TK_NotStart,BEW/RD1/EW/1890,Catch pit and HDPE Pipe Laying,2511,4203.5,108,54,0,6,54,54,0,0,0,,,,2016-04-03 07:00,2016-04-10 17:00,,2014-05-21 15:30,2014-06-01 15:30,2014-05-21 15:30,2014-06-01 15:30,2014-05-21 15:30,2014-06-01 15:30,,2016-04-03 07:00,2016-04-10 17:00,,PT_Normal,,,,,uK84der9F0i5T2op3hsEDg,+gjPWbm5Nk2brzNlsbk26Q,,,N,0,0,,,2013-11-03 15:37,2013-11-12 11:04,admin,admin
548,84484,1296,11112,1423,1,0,N,N,N,CP_Phys,TT_Task,DT_FixedDUR2,RV_OK,TK_NotStart,BEW/RD1/EW/2000,GSB Bed Finalisation,2511,4095.5,0,27,0,3,54,27,73,0,15,,,,2016-04-11 07:00,2016-04-13 17:00,,2014-06-17 15:30,2014-06-22 15:30,2014-06-17 15:30,2014-06-22 15:30,2014-06-17 15:30,2014-06-22 15:30,,2016-04-11 07:00,2016-04-13 17:00,,PT_Normal,,,,,oLqxK17N0E+exsiDgzGKkw,Lb/sG8wjaEqFBGL+8V+P1A,,,N,0,0,,,2013-11-03 15:37,2013-11-12 11:04,admin,admin
549,84499,1296,11114,1423,1,0,N,N,N,CP_Phys,TT_Task,DT_FixedDUR2,RV_OK,TK_NotStart,BEW/RD1/BI/1000,CABC,2511,4635.5,0,252,0,28,72,252,28,0,84,,,,2016-05-24 07:00,2016-06-30 17:00,,2014-05-05 15:30,2014-06-15 15:30,2014-05-05 15:30,2014-06-15 15:30,2014-05-05 15:30,2014-06-15 15:30,,2016-05-24 07:00,2016-06-30 17:00,,PT_Normal,,,,,4AtpwOfzqUKEfnGVCTpv5g,GVmArLe3EkGl5Sp6g3J9ww,,,N,0,0,,,2013-11-03 15:45,2013-11-12 11:04,admin,admin
550,84500,1296,11114,1423,1,0,N,N,N,CP_Phys,TT_Task,DT_FixedDUR2,RV_OK,TK_NotStart,BEW/RD1/BI/1140,BBC,2511,4635.5,0,243,0,27,72,243,110,0,162,,,,2016-07-03 07:00,2016-08-14 17:00,,2014-06-15 15:30,2014-07-22 15:30,2014-06-15 15:30,2014-07-22 15:30,2014-06-15 15:30,2014-07-22 15:30,,2016-07-03 07:00,2016-08-14 17:00,,PT_Normal,,,,,owsAEGgf7EK+0c1FRR5Sxw,mCFpO2sRS0yqziBsPf/ZVg,,,N,0,0,,,2013-11-03 15:45,2013-11-12 09:56,admin,admin
551,84501,1296,11114,1423,1,0,N,N,N,CP_Phys,TT_Task,DT_FixedDUR2,RV_OK,TK_NotStart,BEW/RD1/BI/1220,BWC,2511,4635.5,0,81,0,9,72,81,92,0,63,,,,2016-08-15 07:00,2016-08-25 17:00,,2014-07-22 15:30,2014-08-11 15:30,2014-07-22 15:30,2014-08-11 15:30,2014-07-22 15:30,2014-08-11 15:30,,2016-08-15 07:00,2016-08-25 17:00,,PT_Normal,,,,,V7/rbfcmdUiTPCCWAhiCZQ,zJ9AIKO1L06VrUp1dpnVaA,,,N,0,0,,,2013-11-03 15:45,2013-11-12 09:57,admin,admin
552,84505,1296,11116,1423,1,0,N,N,N,CP_Phys,TT_Task,DT_FixedDUR2,RV_OK,TK_NotStart,BEW/RD1/BI/1020,CABC,2511,4095.5,0,252,0,28,72,252,28,0,84,,,,2016-04-14 07:00,2016-05-24 17:00,,2014-06-22 15:30,2014-08-06 15:30,2014-06-22 15:30,2014-08-06 15:30,2014-06-22 15:30,2014-08-06 15:30,,2016-04-14 07:00,2016-05-24 17:00,,PT_Normal,,,,,BF9hlXf620mya31a65oCOQ,GVmArLe3EkGl5Sp6g3J9ww,,,N,0,0,,,2013-11-03 15:45,2013-11-12 11:04,admin,admin
553,84506,1296,11116,1423,1,0,N,N,N,CP_Phys,TT_Task,DT_FixedDUR2,RV_OK,TK_NotStart,BEW/RD1/BI/1160,BBC,2511,4095.5,0,243,0,27,72,243,110,0,162,,,,2016-05-25 07:00,2016-06-30 17:00,,2014-08-06 15:30,2014-09-14 15:30,2014-08-06 15:30,2014-09-14 15:30,2014-08-06 15:30,2014-09-14 15:30,,2016-05-25 07:00,2016-06-30 17:00,,PT_Normal,,,,,/k25Gwe5XEuE1iLnK/qElA,mCFpO2sRS0yqziBsPf/ZVg,,,N,0,0,,,2013-11-03 15:45,2013-11-12 11:03,admin,admin
554,84507,1296,11116,1423,1,0,N,N,N,CP_Phys,TT_Task,DT_FixedDUR2,RV_OK,TK_NotStart,BEW/RD1/BI/1240,BWC,2511,4095.5,0,81,0,9,72,81,92,0,63,,,,2016-07-03 07:00,2016-07-19 17:00,,2014-09-14 15:30,2014-09-25 15:30,2014-09-14 15:30,2014-09-25 15:30,2014-09-14 15:30,2014-09-25 15:30,,2016-07-03 07:00,2016-07-19 17:00,,PT_Normal,,,,,QLMN9wMAN0GYEl1O8O1e6w,zJ9AIKO1L06VrUp1dpnVaA,,,N,0,0,,,2013-11-03 15:45,2013-11-12 11:03,admin,admin
555,84634,1296,10968,1422,1,0,N,N,N,CP_Drtn,TT_Task,DT_FixedDUR2,RV_OK,TK_NotStart,BEW/PR/FC/1260,Maintanance of Contractors Fecilities,2548,0,0,9855,0,98550,1386,9855,0,0,0,,,,2013-08-30 07:00,2016-08-28 17:00,,2013-08-30 07:00,2016-08-28 17:00,2013-08-30 07:00,2016-08-28 17:00,2013-08-30 07:00,2016-08-28 17:00,,2013-08-30 07:00,2016-08-28 17:00,,PT_Normal,,,,,wx+9TMgKfUqsfiS4SWm8nw,,,,Y,0,0,,,2013-11-03 16:54,2013-11-12 18:09,admin,admin
556,84635,1296,10974,1423,1,0,N,N,N,CP_Drtn,TT_Task,DT_FixedDUR2,RV_OK,TK_NotStart,BEW/PR/AB/1090,As Built Drawing Submission Part 2,,6713.5,3579,216,0,0,0,216,0,0,0,,,,2016-07-11 07:00,2016-08-11 17:00,,2013-07-16 07:00,2013-08-22 08:00,2013-07-16 07:00,2013-08-22 08:00,2013-07-16 07:00,2013-08-22 08:00,,2016-07-11 07:00,2016-08-11 17:00,,PT_Normal,,,,,qUvAy27RMECfHL08OQkq9A,p9KoZ1MB3USaJEIQI0KY5w,,,N,0,0,,,2013-11-03 16:57,2013-11-12 11:04,admin,admin
557,84636,1296,10974,1423,1,0,N,N,N,CP_Drtn,TT_Task,DT_FixedDUR2,RV_OK,TK_NotStart,BEW/PR/AB/1070,As Built Drawing Submission Part 3,,6713.5,3579,216,0,0,0,216,0,0,0,,,,2016-07-11 07:00,2016-08-11 17:00,,2013-07-16 07:00,2013-08-22 08:00,2013-07-16 07:00,2013-08-22 08:00,2013-07-16 07:00,2013-08-22 08:00,,2016-07-11 07:00,2016-08-11 17:00,,PT_Normal,,,,,m82EeGU1/0et/zjvCT1I5g,p9KoZ1MB3USaJEIQI0KY5w,,,N,0,0,,,2013-11-03 16:57,2013-11-12 11:04,admin,admin
558,84637,1296,10974,1423,1,0,N,N,N,CP_Drtn,TT_Task,DT_FixedDUR2,RV_OK,TK_NotStart,BEW/PR/AB/1110,As Built Drawing Submission Part 4,,6713.5,3579,216,0,0,0,216,0,0,0,,,,2016-07-11 07:00,2016-08-11 17:00,,2013-07-16 07:00,2013-08-22 08:00,2013-07-16 07:00,2013-08-22 08:00,2013-07-16 07:00,2013-08-22 08:00,,2016-07-11 07:00,2016-08-11 17:00,,PT_Normal,,,,,dQaXC76teEuzHFvMsPem/g,p9KoZ1MB3USaJEIQI0KY5w,,,N,0,0,,,2013-11-03 16:57,2013-11-12 11:04,admin,admin
559,84638,1296,10974,1423,1,0,N,N,N,CP_Drtn,TT_Task,DT_FixedDUR2,RV_OK,TK_NotStart,BEW/PR/AB/1140,As Built Drawing Submission Part 5,,6803.5,6803.5,216,0,0,0,216,0,0,0,,,,2016-07-25 07:00,2016-08-25 17:00,,2013-07-16 07:00,2013-08-22 08:00,2013-07-16 07:00,2013-08-22 08:00,2013-07-16 07:00,2013-08-22 08:00,,2016-07-25 07:00,2016-08-25 17:00,,PT_Normal,,,,,91KmdSmQ+0msBc73Yuyp9g,p9KoZ1MB3USaJEIQI0KY5w,,,N,0,0,,,2013-11-03 16:57,2013-11-12 11:41,admin,admin
560,84639,1296,10974,1423,1,0,N,N,N,CP_Drtn,TT_Task,DT_FixedDUR2,RV_OK,TK_NotStart,BEW/PR/AB/1030,As Built Drawing Submission Part 6,,3210.5,76,216,0,0,0,216,0,0,0,,,,2016-07-11 07:00,2016-08-11 17:00,,2015-02-08 09:30,2015-03-12 09:30,2015-02-08 09:30,2015-03-12 09:30,2015-02-08 09:30,2015-03-12 09:30,,2016-07-11 07:00,2016-08-11 17:00,,PT_Normal,,,,,9udvqpMbfkC7/2qaItzNFA,p9KoZ1MB3USaJEIQI0KY5w,,,N,0,0,,,2013-11-03 16:57,2013-11-12 11:04,admin,admin
561,84640,1296,10974,1423,1,0,N,N,N,CP_Drtn,TT_Task,DT_FixedDUR2,RV_OK,TK_NotStart,BEW/PR/AB/1060,As Built Drawing Submission Part 7,,6713.5,3579,216,0,0,0,216,0,0,0,,,,2016-07-11 07:00,2016-08-11 17:00,,2013-07-16 07:00,2013-08-22 08:00,2013-07-16 07:00,2013-08-22 08:00,2013-07-16 07:00,2013-08-22 08:00,,2016-07-11 07:00,2016-08-11 17:00,,PT_Normal,,,,,QYF6JgND1UiiQT3ayRWKoA,p9KoZ1MB3USaJEIQI0KY5w,,,N,0,0,,,2013-11-03 16:57,2013-11-12 11:04,admin,admin
562,84641,1296,10974,1423,1,0,N,N,N,CP_Drtn,TT_Task,DT_FixedDUR2,RV_OK,TK_NotStart,BEW/PR/AB/1130,As Built Drawing Submission Part 8,,6839.5,6839.5,180,0,0,0,180,0,0,0,,,,2016-07-31 07:00,2016-08-25 17:00,,2013-07-16 07:00,2013-08-18 08:00,2013-07-16 07:00,2013-08-18 08:00,2013-07-16 07:00,2013-08-18 08:00,,2016-07-31 07:00,2016-08-25 17:00,,PT_Normal,,,,,Mj+EEDfI5kSuIajMpHvEiA,p9KoZ1MB3USaJEIQI0KY5w,,,N,0,0,,,2013-11-03 16:58,2013-11-12 11:41,admin,admin
563,84642,1296,10974,1423,1,0,N,N,N,CP_Drtn,TT_Task,DT_FixedDUR2,RV_OK,TK_NotStart,BEW/PR/AB/1080,As Built Drawing Submission Part 9,,6803.5,6803.5,216,0,0,0,216,0,0,0,,,,2016-07-25 07:00,2016-08-25 17:00,,2013-07-16 07:00,2013-08-22 08:00,2013-07-16 07:00,2013-08-22 08:00,2013-07-16 07:00,2013-08-22 08:00,,2016-07-25 07:00,2016-08-25 17:00,,PT_Normal,,,,,hTutKr39qkypJZ/aFhrQ/g,p9KoZ1MB3USaJEIQI0KY5w,,,N,0,0,,,2013-11-03 16:58,2013-11-12 11:41,admin,admin
564,84643,1296,10974,1423,1,0,N,N,N,CP_Drtn,TT_Task,DT_FixedDUR2,RV_OK,TK_NotStart,BEW/PR/AB/1100,As Built Drawing Submission Part 10,,6713.5,3579,216,0,0,0,216,0,0,0,,,,2016-07-11 07:00,2016-08-11 17:00,,2013-07-16 07:00,2013-08-22 08:00,2013-07-16 07:00,2013-08-22 08:00,2013-07-16 07:00,2013-08-22 08:00,,2016-07-11 07:00,2016-08-11 17:00,,PT_Normal,,,,,PnYYqa9G4k6M0ftc7752lQ,p9KoZ1MB3USaJEIQI0KY5w,,,N,0,0,,,2013-11-03 16:58,2013-11-12 11:04,admin,admin
565,84644,1296,10974,1423,1,0,N,N,N,CP_Drtn,TT_Task,DT_FixedDUR2,RV_OK,TK_NotStart,BEW/PR/AB/1120,As Built Drawing Submission Part 11,,3782.5,648,216,0,0,0,216,0,0,0,,,,2016-07-11 07:00,2016-08-11 17:00,,2014-11-06 14:30,2014-12-11 14:30,2014-11-06 14:30,2014-12-11 14:30,2014-11-06 14:30,2014-12-11 14:30,,2016-07-11 07:00,2016-08-11 17:00,,PT_Normal,,,,,bLH8KM9ZQ0Kpp0zNktTTlg,p9KoZ1MB3USaJEIQI0KY5w,,,N,0,0,,,2013-11-03 16:58,2013-11-12 11:04,admin,admin
566,84645,1296,10974,1423,1,0,N,N,N,CP_Drtn,TT_Task,DT_FixedDUR2,RV_OK,TK_NotStart,BEW/PR/AB/1020,As Built Drawing Submission Part 12,,4922,1139.5,216,0,0,0,216,0,0,0,,,,2016-06-01 07:00,2016-07-04 17:00,,2014-03-31 07:00,2014-05-01 17:00,2014-03-31 07:00,2014-05-01 17:00,2014-03-31 07:00,2014-05-01 17:00,,2016-06-01 07:00,2016-07-04 17:00,,PT_Normal,,,,,Fy5SL8swmkOnpzTEkbUqYw,p9KoZ1MB3USaJEIQI0KY5w,,,N,0,0,,,2013-11-03 16:58,2013-11-11 17:04,admin,admin
567,84646,1296,10974,1423,1,0,N,N,N,CP_Drtn,TT_Task,DT_FixedDUR2,RV_OK,TK_NotStart,BEW/PR/AB/1000,As Built Drawing Submission Part 13,,3134.5,3134.5,90,0,0,0,90,0,0,0,,,,2016-08-14 07:00,2016-08-25 17:00,,2015-03-24 14:30,2015-04-07 14:30,2015-03-24 14:30,2015-04-07 14:30,2015-03-24 14:30,2015-04-07 14:30,,2016-08-14 07:00,2016-08-25 17:00,,PT_Normal,,,,,oHwXXPvD9U28UjchQ2XECg,p9KoZ1MB3USaJEIQI0KY5w,,,N,0,0,,,2013-11-03 16:58,2013-11-12 11:41,admin,admin
568,84647,1296,10974,1423,1,0,N,N,N,CP_Drtn,TT_Task,DT_FixedDUR2,RV_OK,TK_NotStart,BEW/PR/AB/1050,As Built Drawing Submission Part 14,,6713.5,3579,216,0,0,0,216,0,0,0,,,,2016-07-11 07:00,2016-08-11 17:00,,2013-07-16 07:00,2013-08-22 08:00,2013-07-16 07:00,2013-08-22 08:00,2013-07-16 07:00,2013-08-22 08:00,,2016-07-11 07:00,2016-08-11 17:00,,PT_Normal,,,,,TwqyCvRKpEmJwIegMwr23A,p9KoZ1MB3USaJEIQI0KY5w,,,N,0,0,,,2013-11-03 16:58,2013-11-12 11:04,admin,admin
569,84648,1296,10974,1423,1,0,N,N,N,CP_Drtn,TT_Task,DT_FixedDUR2,RV_OK,TK_NotStart,BEW/PR/AB/1010,As Built Drawing Submission Part 15,,6713.5,3579,216,0,0,0,216,0,0,0,,,,2016-07-11 07:00,2016-08-11 17:00,,2013-07-16 07:00,2013-08-22 08:00,2013-07-16 07:00,2013-08-22 08:00,2013-07-16 07:00,2013-08-22 08:00,,2016-07-11 07:00,2016-08-11 17:00,,PT_Normal,,,,,Ra7ZxnVfLUeQZN/h/K3lnw,p9KoZ1MB3USaJEIQI0KY5w,,,N,0,0,,,2013-11-03 16:58,2013-11-12 11:04,admin,admin
570,84663,1296,11044,1423,1,0,N,N,N,CP_Drtn,TT_Task,DT_FixedDrtn,RV_OK,TK_NotStart,BEW/RD1/BI/1060,RCC Drain works,2553,6407.5,6407.5,90,0,360,108,90,0,0,0,,,,2016-08-15 07:00,2016-08-28 17:00,,2013-10-10 07:30,2013-10-27 16:30,2013-10-10 07:30,2013-10-27 16:30,2013-10-10 07:30,2013-10-27 16:30,,2016-08-15 07:00,2016-08-28 17:00,,PT_Normal,,,,,Jq75FqadgkuF3YKOc7b2pg,0Eu9KhjRo0+IPtYnU+gHCQ,,,N,0,0,,,2013-11-05 12:40,2013-11-11 18:46,admin,admin
571,84671,1296,10995,1423,1,0,N,N,N,CP_Phys,TT_Task,DT_FixedDUR2,RV_OK,TK_NotStart,BEW/ST/PL/2000,Pile testing at Overpass 13,,3906.5,3906.5,90,0,0,0,90,0,0,0,,,,2016-08-15 07:00,2016-08-28 17:00,,2014-11-24 16:30,2014-12-08 16:30,2014-11-24 16:30,2014-12-08 16:30,2014-11-24 16:30,2014-12-08 16:30,,2016-08-15 07:00,2016-08-28 17:00,,PT_Normal,,,,,HMVtjcn2tEGTyTkgYQT12A,fDaoHu47pUiE79vzzz01Jg,,,N,0,0,,,2013-11-05 17:05,2013-11-11 17:01,admin,admin
572,84672,1296,10995,1423,1,0,N,N,N,CP_Phys,TT_Task,DT_FixedDUR2,RV_OK,TK_NotStart,BEW/ST/PL/2010,Pile testing at Overpass 12,,4122.5,54,90,0,0,0,90,0,0,0,,,,2016-07-18 07:00,2016-07-31 17:00,,2014-09-18 15:30,2014-10-02 15:30,2014-09-18 15:30,2014-10-02 15:30,2014-09-18 15:30,2014-10-02 15:30,,2016-07-18 07:00,2016-07-31 17:00,,PT_Normal,,,,,vY97ijI6TUGGn82ehZXvVQ,fDaoHu47pUiE79vzzz01Jg,,,N,0,0,,,2013-11-05 17:05,2013-11-11 17:01,admin,admin
573,84673,1296,10986,1423,1,0,N,N,N,CP_Drtn,TT_Task,DT_FixedDUR2,RV_OK,TK_NotStart,BEW/IN/GEN/1000,Mortared Stone Riprap Ch 90 +300 to 93+300,2547,5183.5,0,216,0,216,99,216,0,0,0,,,,2015-11-05 07:00,2015-12-09 17:00,,2013-07-16 07:00,2013-08-22 08:00,2013-07-16 07:00,2013-08-22 08:00,2013-07-16 07:00,2013-08-22 08:00,,2015-11-05 07:00,2015-12-09 17:00,,PT_Normal,,,,,YcPQDg8i5USdM4GNlXTLFg,eoUvLtf5wUqHLpVCJurD8A,,,N,0,0,,,2013-11-06 00:01,2013-11-12 18:26,admin,admin
574,84674,1296,10986,1423,1,0,N,N,N,CP_Drtn,TT_Task,DT_FixedDUR2,RV_OK,TK_NotStart,BEW/IN/GEN/1160,Mortared Stone Riprap Ch 93 +300 to 96+100,2547,5183.5,0,216,0,216,99,216,0,0,0,,,,2015-12-10 07:00,2016-01-13 17:00,,2013-08-22 08:00,2013-09-25 07:30,2013-08-22 08:00,2013-09-25 07:30,2013-08-22 08:00,2013-09-25 07:30,,2015-12-10 07:00,2016-01-13 17:00,,PT_Normal,,,,,qmEj2GfwB0m29d/MI9DnwQ,2XazsDjD+0CLvAAqq3/vGA,,,N,0,0,,,2013-11-06 00:01,2013-11-12 18:26,admin,admin
575,84675,1296,10986,1423,1,0,N,N,N,CP_Drtn,TT_Task,DT_FixedDUR2,RV_OK,TK_NotStart,BEW/IN/GEN/1200,Mortared Stone Riprap Ch 96 +100 to 99+300,2547,5183.5,0,216,0,216,99,216,0,0,0,,,,2016-01-14 07:00,2016-02-16 17:00,,2013-09-25 07:30,2013-10-30 16:30,2013-09-25 07:30,2013-10-30 16:30,2013-09-25 07:30,2013-10-30 16:30,,2016-01-14 07:00,2016-02-16 17:00,,PT_Normal,,,,,wrUgWDb0uk6Aup5qJ/cdFA,4XUmvC0r5kqhSsPwedMGvw,,,N,0,0,,,2013-11-06 00:01,2013-11-12 18:26,admin,admin
576,84676,1296,10986,1423,1,0,N,N,N,CP_Drtn,TT_Task,DT_FixedDUR2,RV_OK,TK_NotStart,BEW/IN/GEN/1240,Mortared Stone Riprap Ch 99 +300 to 102+800,2547,5183.5,0,216,0,216,99,216,0,0,0,,,,2016-02-17 07:00,2016-03-21 17:00,,2013-10-30 16:30,2013-12-05 16:30,2013-10-30 16:30,2013-12-05 16:30,2013-10-30 16:30,2013-12-05 16:30,,2016-02-17 07:00,2016-03-21 17:00,,PT_Normal,,,,,S+rvhchNl0aCJ6beE3xKdw,JNrefl1990OCLYOg+zPuEw,,,N,0,0,,,2013-11-06 00:01,2013-11-12 18:26,admin,admin
577,84677,1296,10986,1423,1,0,N,N,N,CP_Drtn,TT_Task,DT_FixedDUR2,RV_OK,TK_NotStart,BEW/IN/GEN/1300,Mortared Stone Riprap Ch 102 +800 to 105+300,2547,5183.5,0,216,0,216,99,216,0,0,0,,,,2016-03-22 07:00,2016-04-24 17:00,,2013-12-05 16:30,2014-01-09 16:30,2013-12-05 16:30,2014-01-09 16:30,2013-12-05 16:30,2014-01-09 16:30,,2016-03-22 07:00,2016-04-24 17:00,,PT_Normal,,,,,HXXPWtWCQUOGeGhcurai8w,xclcxz4J2Eu1c45hRpAN3w,,,N,0,0,,,2013-11-06 00:01,2013-11-12 18:26,admin,admin
578,84678,1296,10986,1423,1,0,N,N,N,CP_Drtn,TT_Task,DT_FixedDUR2,RV_OK,TK_NotStart,BEW/IN/GEN/1340,Mortared Stone Riprap Ch 105 +300 to 109+000,2547,5183.5,0,216,0,216,99,216,0,0,0,,,,2016-04-25 07:00,2016-05-29 17:00,,2014-01-09 16:30,2014-02-13 16:30,2014-01-09 16:30,2014-02-13 16:30,2014-01-09 16:30,2014-02-13 16:30,,2016-04-25 07:00,2016-05-29 17:00,,PT_Normal,,,,,5Lh49WTJiEOWZnCx2lI2Bw,3sikKlvb6keguV2Jr5RoNg,,,N,0,0,,,2013-11-06 00:01,2013-11-12 18:26,admin,admin
579,84679,1296,10986,1423,1,0,N,N,N,CP_Drtn,TT_Task,DT_FixedDUR2,RV_OK,TK_NotStart,BEW/IN/GEN/1380,Mortared Stone Riprap Ch 109 +000 to 112+200,2547,5183.5,0,216,0,216,99,216,0,0,0,,,,2016-05-30 07:00,2016-06-30 17:00,,2014-02-13 16:30,2014-03-19 16:30,2014-02-13 16:30,2014-03-19 16:30,2014-02-13 16:30,2014-03-19 16:30,,2016-05-30 07:00,2016-06-30 17:00,,PT_Normal,,,,,1PxLIHJ4t0SAqPxHn/EjsQ,QupFg/oTF0a6tJ3wEVC7jw,,,N,0,0,,,2013-11-06 00:01,2013-11-12 18:26,admin,admin
580,84680,1296,10986,1423,1,0,N,N,N,CP_Drtn,TT_Task,DT_FixedDUR2,RV_OK,TK_NotStart,BEW/IN/GEN/1420,Mortared Stone Riprap Ch 112 +200 to 114+900,2547,5183.5,4887,216,0,216,99,216,0,0,0,,,,2016-07-03 07:00,2016-08-09 17:00,,2014-03-19 16:30,2014-04-22 16:30,2014-03-19 16:30,2014-04-22 16:30,2014-03-19 16:30,2014-04-22 16:30,,2016-07-03 07:00,2016-08-09 17:00,,PT_Normal,,,,,wSg+G4qw5EK94TkIJzApnA,ial5fZ/Xjk+J72kxaWl8qA,,,N,0,0,,,2013-11-06 00:01,2013-11-12 18:26,admin,admin
581,84681,1296,10986,1423,1,0,N,N,N,CP_Drtn,TT_Task,DT_FixedDUR2,RV_OK,TK_NotStart,BEW/IN/GEN/1010,Mortared Stone Riprap Ch 114 +900 to 118+000,2547,5183.5,0,216,0,216,99,216,0,0,0,,,,2015-12-10 07:00,2016-01-13 17:00,,2013-08-22 08:00,2013-09-25 07:30,2013-08-22 08:00,2013-09-25 07:30,2013-08-22 08:00,2013-09-25 07:30,,2015-12-10 07:00,2016-01-13 17:00,,PT_Normal,,,,,FE2iSD2FJEmGzZ0VgQhptA,GwoOcrZZDE2+tWlyE+vUxQ,,,N,0,0,,,2013-11-06 00:01,2013-11-12 18:26,admin,admin
582,84682,1296,10986,1423,1,0,N,N,N,CP_Drtn,TT_Task,DT_FixedDUR2,RV_OK,TK_NotStart,BEW/IN/GEN/1170,Mortared Stone Riprap Ch 118 +000 to 121+500,2547,5183.5,3410,216,0,216,99,216,0,0,0,,,,2016-01-14 07:00,2016-02-16 17:00,,2013-09-25 07:30,2013-10-30 16:30,2013-09-25 07:30,2013-10-30 16:30,2013-09-25 07:30,2013-10-30 16:30,,2016-01-14 07:00,2016-02-16 17:00,,PT_Normal,,,,,kOx4yqPuE0q4h9UTyU6zyg,4ZuCkHtaHUqJHu/rTFWUzw,,,N,0,0,,,2013-11-06 00:01,2013-11-12 18:26,admin,admin
583,84683,1296,10986,1423,1,0,N,N,N,CP_Drtn,TT_Task,DT_FixedDUR2,RV_OK,TK_NotStart,BEW/IN/GEN/1210,Mortared Stone Riprap Ch 121 +500 to 124+500,2547,1773.5,0,216,0,216,99,216,0,0,0,,,,2016-02-17 07:00,2016-03-21 17:00,,2015-05-04 16:30,2015-06-14 16:30,2015-05-04 16:30,2015-06-14 16:30,2015-05-04 16:30,2015-06-14 16:30,,2016-02-17 07:00,2016-03-21 17:00,,PT_Normal,,,,,+35QWROkp0KsOFbnJotk9w,FdbyRZoB3EiQ9cxFbwnSVQ,,,N,0,0,,,2013-11-06 00:01,2013-11-12 18:26,admin,admin
584,84684,1296,10986,1423,1,0,N,N,N,CP_Drtn,TT_Task,DT_FixedDUR2,RV_OK,TK_NotStart,BEW/IN/GEN/1250,Mortared Stone Riprap Ch 124 +500 to 127+500,2547,1773.5,0,216,0,216,99,216,0,0,0,,,,2016-03-22 07:00,2016-04-24 17:00,,2015-06-14 16:30,2015-07-16 16:30,2015-06-14 16:30,2015-07-16 16:30,2015-06-14 16:30,2015-07-16 16:30,,2016-03-22 07:00,2016-04-24 17:00,,PT_Normal,,,,,7Jc9YTPDKUqtbCpkowR70g,wiCqi7Sqmk+6n9GbPYG2aw,,,N,0,0,,,2013-11-06 00:01,2013-11-12 18:26,admin,admin
585,84685,1296,10986,1423,1,0,N,N,N,CP_Drtn,TT_Task,DT_FixedDUR2,RV_OK,TK_NotStart,BEW/IN/GEN/1310,Mortared Stone Riprap Ch 127 +500 to 130+500,2547,1773.5,0,216,0,216,99,216,0,0,0,,,,2016-04-25 07:00,2016-05-29 17:00,,2015-07-16 16:30,2015-08-20 16:30,2015-07-16 16:30,2015-08-20 16:30,2015-07-16 16:30,2015-08-20 16:30,,2016-04-25 07:00,2016-05-29 17:00,,PT_Normal,,,,,beiKY8FSckGTdeqywMe1kA,QdhsINUkqkyZ+5uWBIuUQA,,,N,0,0,,,2013-11-06 00:01,2013-11-12 18:26,admin,admin
586,84686,1296,10986,1423,1,0,N,N,N,CP_Drtn,TT_Task,DT_FixedDUR2,RV_OK,TK_NotStart,BEW/IN/GEN/1350,Mortared Stone Riprap Ch 130 +500 to 133+500,2547,1773.5,0,216,0,216,99,216,0,0,0,,,,2016-05-30 07:00,2016-06-30 17:00,,2015-08-20 16:30,2015-09-23 16:30,2015-08-20 16:30,2015-09-23 16:30,2015-08-20 16:30,2015-09-23 16:30,,2016-05-30 07:00,2016-06-30 17:00,,PT_Normal,,,,,91OxLbPC/UqZsj9ZR1GANg,lMzRQVw8sUC+yapt755qhg,,,N,0,0,,,2013-11-06 00:01,2013-11-12 18:26,admin,admin
587,84687,1296,10986,1423,1,0,N,N,N,CP_Drtn,TT_Task,DT_FixedDUR2,RV_OK,TK_NotStart,BEW/IN/GEN/1390,Mortared Stone Riprap Ch 133 +500 to 136+500,2547,1773.5,1477,216,0,216,99,216,0,0,0,,,,2016-07-03 07:00,2016-08-09 17:00,,2015-09-23 16:30,2015-10-28 16:30,2015-09-23 16:30,2015-10-28 16:30,2015-09-23 16:30,2015-10-28 16:30,,2016-07-03 07:00,2016-08-09 17:00,,PT_Normal,,,,,4cxxCjTxME2wps9uq0/3nA,dZXb8jaoCUy2wIvmx41Tlw,,,N,0,0,,,2013-11-06 00:01,2013-11-12 18:26,admin,admin
588,84688,1296,10986,1423,1,0,N,N,N,CP_Drtn,TT_Task,DT_FixedDUR2,RV_OK,TK_NotStart,BEW/IN/GEN/1020,"Loose Stone Riprap Dyke  for Wadi Bridge 11, 12",2547,5633.5,0,216,0,216,63,216,0,0,0,,,,2016-03-24 07:00,2016-04-26 17:00,,2013-09-25 07:30,2013-10-30 16:30,2013-09-25 07:30,2013-10-30 16:30,2013-09-25 07:30,2013-10-30 16:30,,2016-03-24 07:00,2016-04-26 17:00,,PT_Normal,,,,,75y/J6p5MUC+IVyCBaerZg,rneFRuyaIUq085FgncJHsQ,,,N,0,0,,,2013-11-06 00:01,2013-11-12 18:26,admin,admin
589,84689,1296,10986,1423,1,0,N,N,N,CP_Drtn,TT_Task,DT_FixedDUR2,RV_OK,TK_NotStart,BEW/IN/GEN/1030,"Loose Stone Riprap Dyke for Wadi Bridge 13,14",2547,5633.5,0,216,0,216,63,216,0,0,0,,,,2016-04-27 07:00,2016-05-31 17:00,,2013-10-30 16:30,2013-12-05 16:30,2013-10-30 16:30,2013-12-05 16:30,2013-10-30 16:30,2013-12-05 16:30,,2016-04-27 07:00,2016-05-31 17:00,,PT_Normal,,,,,YuozDvC5qUqfFM61+mHX2g,VfxpSkUrCEiM3pqrrpfHfA,,,N,0,0,,,2013-11-06 00:01,2013-11-12 18:26,admin,admin
590,84690,1296,10986,1423,1,0,N,N,N,CP_Drtn,TT_Task,DT_FixedDUR2,RV_OK,TK_NotStart,BEW/IN/GEN/1040,"Mortared Stone Riprap for Dyke at WB 11,12",2547,5633.5,0,216,0,216,99,216,0,0,0,,,,2016-06-01 07:00,2016-07-04 17:00,,2013-12-05 16:30,2014-01-09 16:30,2013-12-05 16:30,2014-01-09 16:30,2013-12-05 16:30,2014-01-09 16:30,,2016-06-01 07:00,2016-07-04 17:00,,PT_Normal,,,,,YHWHNOF0U0KMZOMtVOF9UQ,,,,N,0,0,,,2013-11-06 00:03,2013-11-12 18:26,admin,admin
591,84691,1296,10986,1423,1,0,N,N,N,CP_Drtn,TT_Task,DT_FixedDUR2,RV_OK,TK_NotStart,BEW/IN/GEN/1050,"Mortared Stone Riprap for Dyke at WB 13,14",2547,5633.5,2499,216,0,216,99,216,0,0,0,,,,2016-07-11 07:00,2016-08-11 17:00,,2014-01-09 16:30,2014-02-13 16:30,2014-01-09 16:30,2014-02-13 16:30,2014-01-09 16:30,2014-02-13 16:30,,2016-07-11 07:00,2016-08-11 17:00,,PT_Normal,,,,,c3yzbg7tK02ZyIfySPtSmw,u3d70QUNZkyGPZZgXgfhMQ,,,N,0,0,,,2013-11-06 00:04,2013-11-12 18:26,admin,admin
592,84692,1296,10985,1423,1,0,N,N,N,CP_Drtn,TT_Task,DT_FixedDUR2,RV_OK,TK_NotStart,BEW/IN/GEN/1060,Gabion lining Ch 90 +300 to 93+300,2547,918.5,0,216,0,216,54,216,0,0,0,,,,2015-10-01 07:00,2015-11-04 17:00,,2015-05-03 16:30,2015-06-11 16:30,2015-05-03 16:30,2015-06-11 16:30,2015-05-03 16:30,2015-06-11 16:30,,2015-10-01 07:00,2015-11-04 17:00,,PT_Normal,,,,,O2XRtH8oTE6fs+byGICWLg,jCS3FeA3TUmHC5+qe3oY8A,,,N,0,0,,,2013-11-06 00:15,2013-11-12 18:25,admin,admin
593,84693,1296,10985,1423,1,0,N,N,N,CP_Drtn,TT_Task,DT_FixedDUR2,RV_OK,TK_NotStart,BEW/IN/GEN/1180,Gabion lining Ch 93 +300 to 96+100,2547,1134.5,0,216,0,216,54,216,0,0,0,,,,2015-12-10 07:00,2016-01-13 17:00,,2015-06-11 16:30,2015-07-15 16:30,2015-06-11 16:30,2015-07-15 16:30,2015-06-11 16:30,2015-07-15 16:30,,2015-12-10 07:00,2016-01-13 17:00,,PT_Normal,,,,,wo251KPLdU2gZC3/yyP9CA,K+qOO9ubN0mKMMaJevIT4g,,,N,0,0,,,2013-11-06 00:15,2013-11-12 18:25,admin,admin
594,84694,1296,10985,1423,1,0,N,N,N,CP_Drtn,TT_Task,DT_FixedDUR2,RV_OK,TK_NotStart,BEW/IN/GEN/1220,Gabion liningCh 96 +100 to 99+300,2547,1134.5,0,216,0,216,54,216,0,0,0,,,,2016-01-14 07:00,2016-02-16 17:00,,2015-07-15 16:30,2015-08-19 16:30,2015-07-15 16:30,2015-08-19 16:30,2015-07-15 16:30,2015-08-19 16:30,,2016-01-14 07:00,2016-02-16 17:00,,PT_Normal,,,,,iEKaVuBsEEGvyW5aWgRMDA,sSCjjQamTkqdhVyBuInuIw,,,N,0,0,,,2013-11-06 00:15,2013-11-12 18:25,admin,admin
595,84695,1296,10985,1423,1,0,N,N,N,CP_Drtn,TT_Task,DT_FixedDUR2,RV_OK,TK_NotStart,BEW/IN/GEN/1260,Gabion lining Ch 99 +300 to 102+800,2547,1134.5,0,216,0,216,54,216,0,0,0,,,,2016-02-17 07:00,2016-03-21 17:00,,2015-08-19 16:30,2015-09-22 16:30,2015-08-19 16:30,2015-09-22 16:30,2015-08-19 16:30,2015-09-22 16:30,,2016-02-17 07:00,2016-03-21 17:00,,PT_Normal,,,,,UPsD71On+US3dbLYZtxZRw,JUIn9Z+YyEy6aaoy6dBwjg,,,N,0,0,,,2013-11-06 00:15,2013-11-12 18:25,admin,admin
596,84696,1296,10985,1423,1,0,N,N,N,CP_Drtn,TT_Task,DT_FixedDUR2,RV_OK,TK_NotStart,BEW/IN/GEN/1320,Gabion lining Ch 102 +800 to 105+300,2547,1134.5,0,216,0,216,54,216,0,0,0,,,,2016-03-22 07:00,2016-04-24 17:00,,2015-09-22 16:30,2015-10-27 16:30,2015-09-22 16:30,2015-10-27 16:30,2015-09-22 16:30,2015-10-27 16:30,,2016-03-22 07:00,2016-04-24 17:00,,PT_Normal,,,,,QIQyk3td80+zR/NoUhlT8w,q17/ruOgL0m7TWddK02y1w,,,N,0,0,,,2013-11-06 00:15,2013-11-12 18:25,admin,admin
597,84697,1296,10985,1423,1,0,N,N,N,CP_Drtn,TT_Task,DT_FixedDUR2,RV_OK,TK_NotStart,BEW/IN/GEN/1360,Gabion lining Ch 105 +300 to 109+000,2547,1134.5,0,216,0,216,54,216,0,0,0,,,,2016-04-25 07:00,2016-05-29 17:00,,2015-10-27 16:30,2015-12-01 16:30,2015-10-27 16:30,2015-12-01 16:30,2015-10-27 16:30,2015-12-01 16:30,,2016-04-25 07:00,2016-05-29 17:00,,PT_Normal,,,,,EHHeTAjWL0a/Yww16eMa+g,4zR89Rm6SEq9qTUOZ91gqg,,,N,0,0,,,2013-11-06 00:15,2013-11-12 18:25,admin,admin
598,84698,1296,10985,1423,1,0,N,N,N,CP_Drtn,TT_Task,DT_FixedDUR2,RV_OK,TK_NotStart,BEW/IN/GEN/1400,Gabion lining Ch 109 +000 to 112+200,2547,1134.5,216,216,0,216,54,216,0,0,0,,,,2016-05-30 07:00,2016-06-30 17:00,,2015-12-01 16:30,2016-01-05 16:30,2015-12-01 16:30,2016-01-05 16:30,2015-12-01 16:30,2016-01-05 16:30,,2016-05-30 07:00,2016-06-30 17:00,,PT_Normal,,,,,wVlw/xk370u2hpa1Q2/ZTQ,/lmwv+4tWUS+pK/z0p7HRw,,,N,0,0,,,2013-11-06 00:15,2013-11-12 18:25,admin,admin
599,84699,1296,10985,1423,1,0,N,N,N,CP_Drtn,TT_Task,DT_FixedDUR2,RV_OK,TK_NotStart,BEW/IN/GEN/1430,Gabion lining Ch 112 +200 to 114+900,2547,918.5,622,216,0,216,54,216,0,0,0,,,,2016-07-03 07:00,2016-08-09 17:00,,2016-02-08 16:30,2016-03-13 16:30,2016-02-08 16:30,2016-03-13 16:30,2016-02-08 16:30,2016-03-13 16:30,,2016-07-03 07:00,2016-08-09 17:00,,PT_Normal,,,,,ii38UU7mE0aYN23iSsC5/g,YMCCHg8bp06MU4OmMMOcsA,,,N,0,0,,,2013-11-06 00:15,2013-11-12 18:25,admin,admin
600,84700,1296,10985,1423,1,0,N,N,N,CP_Drtn,TT_Task,DT_FixedDUR2,RV_OK,TK_NotStart,BEW/IN/GEN/1070,Gabion lining Ch 114 +900 to 118+000,2547,918.5,0,216,0,216,54,216,0,0,0,,,,2015-11-05 07:00,2015-12-09 17:00,,2015-06-11 16:30,2015-07-15 16:30,2015-06-11 16:30,2015-07-15 16:30,2015-06-11 16:30,2015-07-15 16:30,,2015-11-05 07:00,2015-12-09 17:00,,PT_Normal,,,,,vJUSBQqQkUeaVhS52QQ2Kw,ZwKq2T5JkUSrsOTTecdCmQ,,,N,0,0,,,2013-11-06 00:15,2013-11-12 18:25,admin,admin
601,84701,1296,10985,1423,1,0,N,N,N,CP_Drtn,TT_Task,DT_FixedDUR2,RV_OK,TK_NotStart,BEW/IN/GEN/1190,Gabion lining Ch 118 +000 to 121+500,2547,918.5,0,216,0,216,54,216,0,0,0,,,,2015-12-10 07:00,2016-01-13 17:00,,2015-07-15 16:30,2015-08-19 16:30,2015-07-15 16:30,2015-08-19 16:30,2015-07-15 16:30,2015-08-19 16:30,,2015-12-10 07:00,2016-01-13 17:00,,PT_Normal,,,,,abMQKcj9+EilSKnbf19Y9w,ROwZZVm8QEiTivPEg4DEmA,,,N,0,0,,,2013-11-06 00:15,2013-11-12 18:25,admin,admin
602,84702,1296,10985,1423,1,0,N,N,N,CP_Drtn,TT_Task,DT_FixedDUR2,RV_OK,TK_NotStart,BEW/IN/GEN/1230,Gabion lining Ch 121 +500 to 124+500,2547,918.5,0,216,0,216,54,216,0,0,0,,,,2016-01-14 07:00,2016-02-16 17:00,,2015-08-19 16:30,2015-09-22 16:30,2015-08-19 16:30,2015-09-22 16:30,2015-08-19 16:30,2015-09-22 16:30,,2016-01-14 07:00,2016-02-16 17:00,,PT_Normal,,,,,TF9WW1yt/U+ZzgF9FPtdfA,EvRfgFaQ/EaGK7Rwti2wFg,,,N,0,0,,,2013-11-06 00:15,2013-11-12 18:25,admin,admin
603,84703,1296,10985,1423,1,0,N,N,N,CP_Drtn,TT_Task,DT_FixedDUR2,RV_OK,TK_NotStart,BEW/IN/GEN/1270,Gabion lining Ch 124 +500 to 127+500,2547,918.5,0,216,0,216,54,216,0,0,0,,,,2016-02-17 07:00,2016-03-21 17:00,,2015-09-22 16:30,2015-10-27 16:30,2015-09-22 16:30,2015-10-27 16:30,2015-09-22 16:30,2015-10-27 16:30,,2016-02-17 07:00,2016-03-21 17:00,,PT_Normal,,,,,6Ap1bM4UUUq6aq8JiXGPqg,qKlGDIvmg0KGbang84tZCQ,,,N,0,0,,,2013-11-06 00:15,2013-11-12 18:25,admin,admin
604,84704,1296,10985,1423,1,0,N,N,N,CP_Drtn,TT_Task,DT_FixedDUR2,RV_OK,TK_NotStart,BEW/IN/GEN/1330,Gabion lining Ch 127 +500 to 130+500,2547,918.5,0,216,0,216,54,216,0,0,0,,,,2016-03-22 07:00,2016-04-24 17:00,,2015-10-27 16:30,2015-12-01 16:30,2015-10-27 16:30,2015-12-01 16:30,2015-10-27 16:30,2015-12-01 16:30,,2016-03-22 07:00,2016-04-24 17:00,,PT_Normal,,,,,AGDrGO12gES/hZjDE6FPXg,3Re8dv4ZHUK+4zRMOmS18g,,,N,0,0,,,2013-11-06 00:15,2013-11-12 18:25,admin,admin
605,84705,1296,10985,1423,1,0,N,N,N,CP_Drtn,TT_Task,DT_FixedDUR2,RV_OK,TK_NotStart,BEW/IN/GEN/1370,Gabion lining Ch 130 +500 to 133+500,2547,918.5,0,216,0,216,54,216,0,0,0,,,,2016-04-25 07:00,2016-05-29 17:00,,2015-12-01 16:30,2016-01-05 16:30,2015-12-01 16:30,2016-01-05 16:30,2015-12-01 16:30,2016-01-05 16:30,,2016-04-25 07:00,2016-05-29 17:00,,PT_Normal,,,,,IRyDMzmj50ikpxUytwWs/A,ZWqI9dXHskyYeK5DwwyPNA,,,N,0,0,,,2013-11-06 00:15,2013-11-12 18:25,admin,admin
606,84706,1296,10985,1423,1,0,N,N,N,CP_Drtn,TT_Task,DT_FixedDUR2,RV_OK,TK_NotStart,BEW/IN/GEN/1410,Gabion lining Ch 133 +500 to 136+500,2547,918.5,0,216,0,216,54,216,0,0,0,,,,2016-05-30 07:00,2016-06-30 17:00,,2016-01-05 16:30,2016-02-08 16:30,2016-01-05 16:30,2016-02-08 16:30,2016-01-05 16:30,2016-02-08 16:30,,2016-05-30 07:00,2016-06-30 17:00,,PT_Normal,,,,,kU3KuMmScEmFg5b2kAT5Mw,+rx51bXaKU6d4FIdTeqK2g,,,N,0,0,,,2013-11-06 00:15,2013-11-12 18:25,admin,admin
607,84707,1296,10981,1423,1,0,N,N,N,CP_Phys,TT_Task,DT_FixedDUR2,RV_OK,TK_NotStart,BEW/IN/GEN/1080,Ch: 96+100 to 97+100,2547,3609.5,1080,216,0,77.999999,108,216,857.999999,0,233.999997,,,,2015-10-06 07:00,2015-11-09 17:00,,2014-02-27 15:30,2014-04-02 15:30,2014-02-27 15:30,2014-04-02 15:30,2014-02-27 15:30,2014-04-02 15:30,,2015-10-06 07:00,2015-11-09 17:00,,PT_Normal,,,,,jriGESxajEKSLFsTjw5QpQ,YuLR0ZxCWU2zGyck+mR5cA,,,N,0,0,,,2013-11-06 00:22,2013-11-12 18:25,admin,admin
608,84708,1296,10981,1423,1,0,N,N,N,CP_Phys,TT_Task,DT_FixedDUR2,RV_OK,TK_NotStart,BEW/IN/GEN/1280,Ch: 109+000 to 110+000,2547,1584.5,0,216,0,149.999999,108,216,1649.999999,0,449.999997,,,,2016-02-22 07:00,2016-03-24 17:00,,2015-06-14 16:30,2015-07-16 16:30,2015-06-14 16:30,2015-07-16 16:30,2015-06-14 16:30,2015-07-16 16:30,,2016-02-22 07:00,2016-03-24 17:00,,PT_Normal,,,,,180xIfaB30+ZPmQ369hDkw,CMxue9LFYUqhP8tem3j0Lw,,,N,0,0,,,2013-11-06 00:22,2013-11-12 18:25,admin,admin
609,84709,1296,10981,1423,1,0,N,N,N,CP_Phys,TT_Task,DT_FixedDUR2,RV_OK,TK_NotStart,BEW/IN/GEN/1090,Ch: 111+700 to 114+500,2547,2529.5,0,216,0,221.999998,108,216,2441.999998,0,665.999994,,,,2015-11-10 07:00,2015-12-14 17:00,,2014-09-25 15:30,2014-11-02 16:30,2014-09-25 15:30,2014-11-02 16:30,2014-09-25 15:30,2014-11-02 16:30,,2015-11-10 07:00,2015-12-14 17:00,,PT_Normal,,,,,5uVSo3DM0EG5gu0ot19Qgw,s//kPAkt6EafkmN+P09hZQ,,,N,0,0,,,2013-11-06 00:22,2013-11-12 18:25,admin,admin
610,84710,1296,10981,1423,1,0,N,N,N,CP_Phys,TT_Task,DT_FixedDUR2,RV_OK,TK_NotStart,BEW/IN/GEN/1460,Ch: 114+900 to 116+200,2547,1584.5,0,216,0,45,108,216,495,0,135,,,,2016-04-28 07:00,2016-06-01 17:00,,2015-08-20 16:30,2015-09-23 16:30,2015-08-20 16:30,2015-09-23 16:30,2015-08-20 16:30,2015-09-23 16:30,,2016-04-28 07:00,2016-06-01 17:00,,PT_Normal,,,,,+TB5P5A7ek+4J8Y1/QGzNA,T9/QWCmmbUW603DLxdK37Q,,,N,0,0,,,2013-11-06 00:22,2013-11-12 18:25,admin,admin
611,84711,1296,10981,1423,1,0,N,N,N,CP_Phys,TT_Task,DT_FixedDUR2,RV_OK,TK_NotStart,BEW/IN/GEN/1440,Ch:  119+200 to 120+300,2547,1584.5,0,216,0,83.999999,108,216,923.999999,0,251.999997,,,,2016-03-27 07:00,2016-04-27 17:00,,2015-07-16 16:30,2015-08-20 16:30,2015-07-16 16:30,2015-08-20 16:30,2015-07-16 16:30,2015-08-20 16:30,,2016-03-27 07:00,2016-04-27 17:00,,PT_Normal,,,,,kpFlZOx1v0CweuTf+D9Qcg,bFS5fWNGNUeEowa2CNZivw,,,N,0,0,,,2013-11-06 00:22,2013-11-12 18:25,admin,admin
612,84712,1296,10981,1423,1,0,N,N,N,CP_Phys,TT_Task,DT_FixedDUR2,RV_OK,TK_NotStart,BEW/IN/GEN/1100,Ch: 122+900 to 124+500,2547,2529.5,945,216,0,244.999998,108,216,2694.999998,0,734.999994,,,,2015-12-15 07:00,2016-01-18 17:00,,2014-11-02 16:30,2014-12-07 16:30,2014-11-02 16:30,2014-12-07 16:30,2014-11-02 16:30,2014-12-07 16:30,,2015-12-15 07:00,2016-01-18 17:00,,PT_Normal,,,,,Ovz20FWFAUGvNUhU9uCJxw,1ITNo8cNjEuhlxwJi+0e7A,,,N,0,0,,,2013-11-06 00:22,2013-11-12 18:25,admin,admin
613,84713,1296,10981,1423,1,0,N,N,N,CP_Phys,TT_Task,DT_FixedDUR2,RV_OK,TK_NotStart,BEW/IN/GEN/1110,Ch: 134+300 to 136+100,2547,1584.5,0,216,0,374.999996,108,216,4500,0,1124.999988,,,,2016-01-19 07:00,2016-02-21 17:00,,2015-05-04 16:30,2015-06-14 16:30,2015-05-04 16:30,2015-06-14 16:30,2015-05-04 16:30,2015-06-14 16:30,,2016-01-19 07:00,2016-02-21 17:00,,PT_Normal,,,,,8vQU2TpRJEaXOmmyOqegaA,RARUs6BSmU2g80cTp98s4w,,,N,0,0,,,2013-11-06 00:22,2013-11-12 18:25,admin,admin
614,84714,1296,10982,1423,1,0,N,N,N,CP_Phys,TT_Task,DT_FixedDUR2,RV_OK,TK_NotStart,BEW/IN/GEN/1120,Ch: 96+100 to 97+100,2547,4716.5,891,405,0,77.999999,108,405,857.999999,0,233.999997,,,,2016-03-30 07:00,2016-06-01 17:00,,2014-02-27 15:30,2014-05-01 15:30,2014-02-27 15:30,2014-05-01 15:30,2014-02-27 15:30,2014-05-01 15:30,,2016-03-30 07:00,2016-06-01 17:00,,PT_Normal,,,,,SH62JaocaUyb1/w2s+Cuzw,A30jvggSMESmYVcMXln52w,,,N,0,0,,,2013-11-06 09:06,2013-11-12 18:25,admin,admin
615,84715,1296,10982,1423,1,0,N,N,N,CP_Phys,TT_Task,DT_FixedDUR2,RV_OK,TK_NotStart,BEW/IN/GEN/1290,Ch: 109+000 to 110+000,2547,2043.5,459,405,0,149.999999,108,405,1649.999999,0,449.999997,,,,2016-03-30 07:00,2016-06-01 17:00,,2015-05-04 16:30,2015-07-13 16:30,2015-05-04 16:30,2015-07-13 16:30,2015-05-04 16:30,2015-07-13 16:30,,2016-03-30 07:00,2016-06-01 17:00,,PT_Normal,,,,,dsGIcdLIeEygCOCxkbNwOg,GrWUEOqGxE69H7Bft4G5MA,,,N,0,0,,,2013-11-06 09:06,2013-11-12 18:25,admin,admin
616,84716,1296,10982,1423,1,0,N,N,N,CP_Phys,TT_Task,DT_FixedDUR2,RV_OK,TK_NotStart,BEW/IN/GEN/1130,Ch: 111+700 to 114+500,2547,3825.5,3529,405,0,221.999998,108,405,2441.999998,0,665.999994,,,,2016-06-02 07:00,2016-08-09 17:00,,2014-09-25 15:30,2014-12-02 16:30,2014-09-25 15:30,2014-12-02 16:30,2014-09-25 15:30,2014-12-02 16:30,,2016-06-02 07:00,2016-08-09 17:00,,PT_Normal,,,,,PT+snq3X+kqoICBxAX4wRA,UdhEi5ZCokmEfnvlXSqBhg,,,N,0,0,,,2013-11-06 09:06,2013-11-12 18:25,admin,admin
617,84717,1296,10982,1423,1,0,N,N,N,CP_Phys,TT_Task,DT_FixedDUR2,RV_OK,TK_NotStart,BEW/IN/GEN/1470,Ch: 114+900 to 116+200,2547,1584.5,1288,405,0,45,108,405,495,0,135,,,,2016-06-02 07:00,2016-08-09 17:00,,2015-09-23 16:30,2015-11-29 16:30,2015-09-23 16:30,2015-11-29 16:30,2015-09-23 16:30,2015-11-29 16:30,,2016-06-02 07:00,2016-08-09 17:00,,PT_Normal,,,,,Zmszuv1lIkCNIldqpFvTxA,uXrMPAoCb0KSZ0lk62jwaw,,,N,0,0,,,2013-11-06 09:06,2013-11-12 18:25,admin,admin
618,84718,1296,10982,1423,1,0,N,N,N,CP_Phys,TT_Task,DT_FixedDUR2,RV_OK,TK_NotStart,BEW/IN/GEN/1450,Ch:  119+200 to 120+300,2547,2457.5,873,405,0,83.999999,108,405,923.999999,0,251.999997,,,,2016-03-30 07:00,2016-06-01 17:00,,2015-03-01 16:30,2015-05-03 16:30,2015-03-01 16:30,2015-05-03 16:30,2015-03-01 16:30,2015-05-03 16:30,,2016-03-30 07:00,2016-06-01 17:00,,PT_Normal,,,,,ZmmSKur7/0yelneM3Ewv9g,Q3LnmfC4gUqUPJlG2kuFZw,,,N,0,0,,,2013-11-06 09:06,2013-11-12 18:25,admin,admin
619,84719,1296,10982,1423,1,0,N,N,N,CP_Phys,TT_Task,DT_FixedDUR2,RV_OK,TK_NotStart,BEW/IN/GEN/1140,Ch: 122+900 to 124+500,2547,2538.5,765,405,0,244.999998,108,405,2694.999998,0,734.999994,,,,2015-10-11 07:00,2015-12-14 17:00,,2014-08-26 15:30,2014-10-30 16:30,2014-08-26 15:30,2014-10-30 16:30,2014-08-26 15:30,2014-10-30 16:30,,2015-10-11 07:00,2015-12-14 17:00,,PT_Normal,,,,,Aw7AQ3X3J0WfXh0RstrWxQ,MUo+aoqDdk+3Agx5+r4okw,,,N,0,0,,,2013-11-06 09:06,2013-11-12 18:25,admin,admin
620,84720,1296,10982,1423,1,0,N,N,N,CP_Phys,TT_Task,DT_FixedDUR2,RV_OK,TK_NotStart,BEW/IN/GEN/1150,Ch: 134+300 to 136+100,2547,1773.5,0,405,0,374.999996,108,405,4500,0,1124.999988,,,,2015-12-15 07:00,2016-02-16 17:00,,2015-03-02 16:30,2015-05-04 16:30,2015-03-02 16:30,2015-05-04 16:30,2015-03-02 16:30,2015-05-04 16:30,,2015-12-15 07:00,2016-02-16 17:00,,PT_Normal,,,,,+6kVy4s7NkCpzip/6VarpQ,fJ9yTwECk0a5EsQKeltxNg,,,N,0,0,,,2013-11-06 09:06,2013-11-12 18:25,admin,admin
621,84725,1296,11114,1423,1,0,N,N,N,CP_Drtn,TT_Task,DT_FixedDrtn,RV_OK,TK_NotStart,BEW/RD1/BI/1100,RCC Drain works,,4635.5,4635.5,90,0,360,108,90,0,0,0,,,,2016-08-15 07:00,2016-08-28 17:00,,2014-07-22 15:30,2014-08-12 15:30,2014-07-22 15:30,2014-08-12 15:30,2014-07-22 15:30,2014-08-12 15:30,,2016-08-15 07:00,2016-08-28 17:00,,PT_Normal,,,,,Biix/PBQf0C0/faT3gftWQ,6vYpfWzcWUCEZzLq4lCBHg,,,N,0,0,,,2013-11-06 09:30,2013-11-12 11:03,admin,admin
622,84727,1296,11116,1423,1,0,N,N,N,CP_Drtn,TT_Task,DT_FixedDrtn,RV_OK,TK_NotStart,BEW/RD1/BI/1120,RCC Drain works,,4095.5,0,90,0,360,108,90,0,0,0,,,,2016-07-03 07:00,2016-07-20 17:00,,2014-09-14 15:30,2014-09-28 15:30,2014-09-14 15:30,2014-09-28 15:30,2014-09-14 15:30,2014-09-28 15:30,,2016-07-03 07:00,2016-07-20 17:00,,PT_Normal,,,,,qmowHt2Gg0G/ZGSJv4qocg,6vYpfWzcWUCEZzLq4lCBHg,,,N,0,0,,,2013-11-06 09:30,2013-11-12 11:10,admin,admin
623,84729,1296,11167,1423,1,0,N,N,N,CP_Drtn,TT_Task,DT_FixedDUR2,RV_OK,TK_NotStart,BEW/IN/GEN/4020,Instalation of W Beams,2547,6821.5,6821.5,207,0,207,54,207,0,0,0,,,,2016-07-27 07:00,2016-08-28 17:00,,2013-07-16 07:00,2013-08-21 08:00,2013-07-16 07:00,2013-08-21 08:00,2013-07-16 07:00,2013-08-21 08:00,,2016-07-27 07:00,2016-08-28 17:00,,PT_Normal,,,,,XX4oNXwHUEGgpoSxkLYnVA,,,,N,0,0,,,2013-11-06 09:44,2013-11-12 18:26,admin,admin
624,84730,1296,11167,1423,1,0,N,N,N,CP_Drtn,TT_Task,DT_FixedDUR2,RV_OK,TK_NotStart,BEW/IN/GEN/4030,Pre Cast Concrete Barriers,2547,6821.5,6821.5,207,0,207,45,207,0,0,0,,,,2016-07-27 07:00,2016-08-28 17:00,,2013-07-16 07:00,2013-08-21 08:00,2013-07-16 07:00,2013-08-21 08:00,2013-07-16 07:00,2013-08-21 08:00,,2016-07-27 07:00,2016-08-28 17:00,,PT_Normal,,,,,OT59bR/OVE6PGLYjqmKrow,,,,N,0,0,,,2013-11-06 09:44,2013-11-12 18:27,admin,admin
625,84765,1296,11147,1423,1,0,N,N,N,CP_Drtn,TT_Task,DT_FixedDUR2,RV_OK,TK_NotStart,BEW/IN/GEN/4380,Pre Cast Concrete Barriers,2547,6821.5,6821.5,207,0,207,45,207,0,0,0,,,,2016-07-27 07:00,2016-08-28 17:00,,2013-07-16 07:00,2013-08-21 08:00,2013-07-16 07:00,2013-08-21 08:00,2013-07-16 07:00,2013-08-21 08:00,,2016-07-27 07:00,2016-08-28 17:00,,PT_Normal,,,,,odwFqNkGBki/T+jZCX3vIw,HjXXRa4HCUG/dPihyhpy0g,,,N,0,0,,,2013-11-06 09:50,2013-11-12 18:27,admin,admin
626,84767,1296,11217,1423,1,0,N,N,N,CP_Drtn,TT_Task,DT_FixedDUR2,RV_OK,TK_NotStart,BEW/IN/GEN/4400,Pre Cast Concrete Barriers,2547,6704.5,6408,207,0,207,45,207,0,0,0,,,,2016-07-04 07:00,2016-08-09 17:00,,2013-07-16 07:00,2013-08-21 08:00,2013-07-16 07:00,2013-08-21 08:00,2013-07-16 07:00,2013-08-21 08:00,,2016-07-04 07:00,2016-08-09 17:00,,PT_Normal,,,,,Lgu0Wv/5PUWJSa27SRK4UQ,HjXXRa4HCUG/dPihyhpy0g,,,N,0,0,,,2013-11-06 09:50,2013-11-12 18:27,admin,admin
627,84769,1296,11147,1423,1,0,N,N,N,CP_Drtn,TT_Task,DT_FixedDUR2,RV_OK,TK_NotStart,BEW/IN/GEN/4420,Pier Protection,2547,6812.5,6812.5,216,0,216,36,216,0,0,0,,,,2016-07-26 07:00,2016-08-28 17:00,,2013-07-16 07:00,2013-08-22 08:00,2013-07-16 07:00,2013-08-22 08:00,2013-07-16 07:00,2013-08-22 08:00,,2016-07-26 07:00,2016-08-28 17:00,,PT_Normal,,,,,EBj206fJQkuFspYyNVPI6g,4zol8URgmEK+w8a6Xe5dSQ,,,N,0,0,,,2013-11-06 10:08,2013-11-12 18:27,admin,admin
628,84771,1296,11217,1423,1,0,N,N,N,CP_Drtn,TT_Task,DT_FixedDUR2,RV_OK,TK_NotStart,BEW/IN/GEN/4440,Pier Protection,2547,6704.5,6408,207,0,207,36,207,0,0,0,,,,2016-07-04 07:00,2016-08-09 17:00,,2013-07-16 07:00,2013-08-21 08:00,2013-07-16 07:00,2013-08-21 08:00,2013-07-16 07:00,2013-08-21 08:00,,2016-07-04 07:00,2016-08-09 17:00,,PT_Normal,,,,,3TBFx6hQ7U6tzl1QWAJtLw,kkIbzUvw60KSqFdzkxsz2w,,,N,0,0,,,2013-11-06 10:11,2013-11-12 18:27,admin,admin
629,84779,1296,11059,1423,1,0,N,N,N,CP_Drtn,TT_Task,DT_FixedDUR2,RV_OK,TK_NotStart,BEW/IN/GEN/4520,Instalation of Chain Link fences,2547,6488.5,6488.5,540,0,540,99,540,0,0,0,,,,2016-05-31 07:00,2016-08-28 17:00,,2013-07-16 07:00,2013-10-13 07:30,2013-07-16 07:00,2013-10-13 07:30,2013-07-16 07:00,2013-10-13 07:30,,2016-05-31 07:00,2016-08-28 17:00,,PT_Normal,,,,,g+GLY9XPkEaXcUdGOK7b+Q,T6vLycAUY0uLglsq9uZiTw,,,N,0,0,,,2013-11-06 10:18,2013-11-12 18:26,admin,admin
630,84780,1296,11059,1423,1,0,N,N,N,CP_Drtn,TT_Task,DT_FixedDUR2,RV_OK,TK_NotStart,BEW/IN/GEN/4530,Instalation of Row Markers,2547,6318.5,6318.5,216,0,216,54,216,0,0,0,,,,2016-07-26 07:00,2016-08-28 17:00,,2013-10-03 16:30,2013-11-11 15:30,2013-10-03 16:30,2013-11-11 15:30,2013-10-03 16:30,2013-11-11 15:30,,2016-07-26 07:00,2016-08-28 17:00,,PT_Normal,,,,,r/9gjRjy4US/fG3gzvyYYw,ebXVfewcBEeYE/4uBKn0Kw,,,N,0,0,,,2013-11-06 10:19,2013-11-12 18:26,admin,admin
631,84781,1296,11059,1423,1,0,N,N,N,CP_Drtn,TT_Task,DT_FixedDUR2,RV_OK,TK_NotStart,BEW/IN/GEN/4540,Instalation of Road Studs & Bollards,2547,6416.5,0,369,0,369,54,369,0,0,0,,,,2016-05-19 07:00,2016-07-20 17:00,,2013-07-16 07:00,2013-09-16 08:00,2013-07-16 07:00,2013-09-16 08:00,2013-07-16 07:00,2013-09-16 08:00,,2016-05-19 07:00,2016-07-20 17:00,,PT_Normal,,,,,D3I1EsXO/EahgoD7xpK7Tg,ObA4W4oGDUmulu3vTI2ZtQ,,,N,0,0,,,2013-11-06 10:19,2013-11-12 18:26,admin,admin
632,84824,1296,11077,1423,1,0,N,N,N,CP_Drtn,TT_Task,DT_FixedDUR2,RV_OK,TK_NotStart,BEW/IN/GEN/4970,Traffic Signs LHS,2547,6335.5,0,225,0,225,54,225,0,0,0,,,,2016-05-08 07:00,2016-06-09 17:00,,2013-07-16 07:00,2013-08-25 08:00,2013-07-16 07:00,2013-08-25 08:00,2013-07-16 07:00,2013-08-25 08:00,,2016-05-08 07:00,2016-06-09 17:00,,PT_Normal,,,,,YVbZjqjWFEu3ftCe0+noow,ebXVfewcBEeYE/4uBKn0Kw,,,N,0,0,,,2013-11-06 10:32,2013-11-12 18:28,admin,admin
633,84825,1296,11077,1423,1,0,N,N,N,CP_Drtn,TT_Task,DT_FixedDUR2,RV_OK,TK_NotStart,BEW/IN/GEN/4980,Road Markings LHS,2547,6353.5,0,216,0,216,54,216,0,0,0,,,,2016-05-10 07:00,2016-06-12 17:00,,2013-07-16 07:00,2013-08-22 08:00,2013-07-16 07:00,2013-08-22 08:00,2013-07-16 07:00,2013-08-22 08:00,,2016-05-10 07:00,2016-06-12 17:00,,PT_Normal,,,,,4gGHqbrarU+FpbLVhdaOPg,ObA4W4oGDUmulu3vTI2ZtQ,,,N,0,0,,,2013-11-06 10:32,2013-11-12 18:28,admin,admin
634,84826,1296,11077,1423,1,0,N,N,N,CP_Drtn,TT_Task,DT_FixedDUR2,RV_OK,TK_NotStart,BEW/IN/GEN/4990,Flag Pole erection,2547,6569.5,621,216,0,216,54,216,0,0,0,,,,2016-06-13 07:00,2016-07-20 17:00,,2013-07-16 07:00,2013-08-22 08:00,2013-07-16 07:00,2013-08-22 08:00,2013-07-16 07:00,2013-08-22 08:00,,2016-06-13 07:00,2016-07-20 17:00,,PT_Normal,,,,,mexAkm6orUyMH5MPmo2mDg,EYBi10j8CEuIf79mC+2DAg,,,N,0,0,,,2013-11-06 10:35,2013-11-12 18:25,admin,admin
635,84827,1296,11077,1423,1,0,N,N,N,CP_Drtn,TT_Task,DT_FixedDUR2,RV_OK,TK_NotStart,BEW/IN/GEN/5000,Camera Foundations,2547,6569.5,2474,216,0,216,72,216,0,0,0,,,,2016-06-13 07:00,2016-07-20 17:00,,2013-07-16 07:00,2013-08-22 08:00,2013-07-16 07:00,2013-08-22 08:00,2013-07-16 07:00,2013-08-22 08:00,,2016-06-13 07:00,2016-07-20 17:00,,PT_Normal,,,,,wEwnMlA+dUKiCbSXIznViQ,g6aKjVnE3UK7TzRP2uHPDw,,,N,0,0,,,2013-11-06 10:36,2013-11-12 18:24,admin,admin
636,84828,1296,11077,1423,1,0,N,N,N,CP_Drtn,TT_Task,DT_FixedDUR2,RV_OK,TK_NotStart,BEW/IN/GEN/5820,Traffic Signs RHS,2547,6335.5,621,225,0,225,54,225,0,0,0,,,,2016-06-12 07:00,2016-07-20 17:00,,2013-08-25 08:00,2013-09-29 07:30,2013-08-25 08:00,2013-09-29 07:30,2013-08-25 08:00,2013-09-29 07:30,,2016-06-12 07:00,2016-07-20 17:00,,PT_Normal,,,,,JlxXZFrfgkeoec4UQ/pe6Q,QY9Q2eUmGE6U65/xpcOxkA,,,N,0,0,,,2013-11-06 10:43,2013-11-12 18:28,admin,admin
637,84829,1296,11077,1423,1,0,N,N,N,CP_Drtn,TT_Task,DT_FixedDUR2,RV_OK,TK_NotStart,BEW/IN/GEN/5670,Road Markings RHS,2547,6353.5,621,216,0,216,54,216,0,0,0,,,,2016-06-13 07:00,2016-07-20 17:00,,2013-08-22 08:00,2013-09-25 07:30,2013-08-22 08:00,2013-09-25 07:30,2013-08-22 08:00,2013-09-25 07:30,,2016-06-13 07:00,2016-07-20 17:00,,PT_Normal,,,,,PjW9W8j1+0utXgdfzqVjpA,EYBi10j8CEuIf79mC+2DAg,,,N,0,0,,,2013-11-06 10:43,2013-11-12 18:28,admin,admin
638,84878,1296,11192,1423,1,0,N,N,N,CP_Drtn,TT_Task,DT_FixedDUR2,RV_OK,TK_NotStart,BEW/IN/GEN/5330,Traffic Signs LHS,2547,6335.5,0,225,0,225,54,225,0,0,0,,,,2016-05-08 07:00,2016-06-09 17:00,,2013-07-16 07:00,2013-08-25 08:00,2013-07-16 07:00,2013-08-25 08:00,2013-07-16 07:00,2013-08-25 08:00,,2016-05-08 07:00,2016-06-09 17:00,,PT_Normal,,,,,uIE+1EtjLUCI2lwY55KwWQ,QY9Q2eUmGE6U65/xpcOxkA,,,N,0,0,,,2013-11-06 10:45,2013-11-12 18:28,admin,admin
639,84879,1296,11192,1423,1,0,N,N,N,CP_Drtn,TT_Task,DT_FixedDUR2,RV_OK,TK_NotStart,BEW/IN/GEN/5340,Road Markings LHS,2547,6353.5,0,216,0,216,54,216,0,0,0,,,,2016-05-10 07:00,2016-06-12 17:00,,2013-07-16 07:00,2013-08-22 08:00,2013-07-16 07:00,2013-08-22 08:00,2013-07-16 07:00,2013-08-22 08:00,,2016-05-10 07:00,2016-06-12 17:00,,PT_Normal,,,,,y7HkvDXlv0y4sGRCIbj4CQ,EYBi10j8CEuIf79mC+2DAg,,,N,0,0,,,2013-11-06 10:45,2013-11-12 18:28,admin,admin
640,84880,1296,11192,1423,1,0,N,N,N,CP_Drtn,TT_Task,DT_FixedDUR2,RV_OK,TK_NotStart,BEW/IN/GEN/5350,Flag Pole erection,2547,6569.5,621,216,0,216,54,216,0,0,0,,,,2016-06-13 07:00,2016-07-20 17:00,,2013-07-16 07:00,2013-08-22 08:00,2013-07-16 07:00,2013-08-22 08:00,2013-07-16 07:00,2013-08-22 08:00,,2016-06-13 07:00,2016-07-20 17:00,,PT_Normal,,,,,1Ln35VCTakiKY9xwB3V5vQ,g6aKjVnE3UK7TzRP2uHPDw,,,N,0,0,,,2013-11-06 10:45,2013-11-12 18:25,admin,admin
641,84881,1296,11192,1423,1,0,N,N,N,CP_Drtn,TT_Task,DT_FixedDUR2,RV_OK,TK_NotStart,BEW/IN/GEN/5360,Camera Foundations,2547,6569.5,2474,216,0,216,72,216,0,0,0,,,,2016-06-13 07:00,2016-07-20 17:00,,2013-07-16 07:00,2013-08-22 08:00,2013-07-16 07:00,2013-08-22 08:00,2013-07-16 07:00,2013-08-22 08:00,,2016-06-13 07:00,2016-07-20 17:00,,PT_Normal,,,,,BxUc1YpXJE6AzV9voWCUnw,g/J3U6ON70qaDtS2PNXJyQ,,,N,0,0,,,2013-11-06 10:45,2013-11-12 18:24,admin,admin
642,84882,1296,11192,1423,1,0,N,N,N,CP_Drtn,TT_Task,DT_FixedDUR2,RV_OK,TK_NotStart,BEW/IN/GEN/5910,Traffic Signs RHS,2547,6335.5,621,225,0,225,54,225,0,0,0,,,,2016-06-12 07:00,2016-07-20 17:00,,2013-08-25 08:00,2013-09-29 07:30,2013-08-25 08:00,2013-09-29 07:30,2013-08-25 08:00,2013-09-29 07:30,,2016-06-12 07:00,2016-07-20 17:00,,PT_Normal,,,,,fJdhy11WQkuxiKKO+Bv+0w,Uu8RpkZXt06KzyZwjDuVkg,,,N,0,0,,,2013-11-06 10:45,2013-11-12 18:28,admin,admin
643,84883,1296,11192,1423,1,0,N,N,N,CP_Drtn,TT_Task,DT_FixedDUR2,RV_OK,TK_NotStart,BEW/IN/GEN/5760,Road Markings RHS,2547,6353.5,621,216,0,216,54,216,0,0,0,,,,2016-06-13 07:00,2016-07-20 17:00,,2013-08-22 08:00,2013-09-25 07:30,2013-08-22 08:00,2013-09-25 07:30,2013-08-22 08:00,2013-09-25 07:30,,2016-06-13 07:00,2016-07-20 17:00,,PT_Normal,,,,,NyTOwGUBNkWXX8jZ+dUHBg,iop1BwzJVEy9Y1ff64GnzQ,,,N,0,0,,,2013-11-06 10:45,2013-11-12 18:28,admin,admin
644,84884,1296,11230,1423,1,0,N,N,N,CP_Drtn,TT_Task,DT_FixedDUR2,RV_OK,TK_NotStart,BEW/IN/GEN/5370,Traffic Signs LHS,2547,6335.5,0,225,0,225,54,225,0,0,0,,,,2016-05-08 07:00,2016-06-09 17:00,,2013-07-16 07:00,2013-08-25 08:00,2013-07-16 07:00,2013-08-25 08:00,2013-07-16 07:00,2013-08-25 08:00,,2016-05-08 07:00,2016-06-09 17:00,,PT_Normal,,,,,2NEEAfeiHESIWYrHsi1Q+w,QY9Q2eUmGE6U65/xpcOxkA,,,N,0,0,,,2013-11-06 10:46,2013-11-12 18:28,admin,admin
645,84885,1296,11230,1423,1,0,N,N,N,CP_Drtn,TT_Task,DT_FixedDUR2,RV_OK,TK_NotStart,BEW/IN/GEN/5380,Road Markings LHS,2547,6353.5,0,216,0,216,54,216,0,0,0,,,,2016-05-10 07:00,2016-06-12 17:00,,2013-07-16 07:00,2013-08-22 08:00,2013-07-16 07:00,2013-08-22 08:00,2013-07-16 07:00,2013-08-22 08:00,,2016-05-10 07:00,2016-06-12 17:00,,PT_Normal,,,,,Don6fMFWMUSb1masoe3CJQ,EYBi10j8CEuIf79mC+2DAg,,,N,0,0,,,2013-11-06 10:46,2013-11-12 18:28,admin,admin
646,84886,1296,11230,1423,1,0,N,N,N,CP_Drtn,TT_Task,DT_FixedDUR2,RV_OK,TK_NotStart,BEW/IN/GEN/5390,Flag Pole erection,2547,6569.5,621,216,0,216,54,216,0,0,0,,,,2016-06-13 07:00,2016-07-20 17:00,,2013-07-16 07:00,2013-08-22 08:00,2013-07-16 07:00,2013-08-22 08:00,2013-07-16 07:00,2013-08-22 08:00,,2016-06-13 07:00,2016-07-20 17:00,,PT_Normal,,,,,vqAbcfX1z0erRAm1qDc76w,g6aKjVnE3UK7TzRP2uHPDw,,,N,0,0,,,2013-11-06 10:46,2013-11-12 18:25,admin,admin
647,84887,1296,11230,1423,1,0,N,N,N,CP_Drtn,TT_Task,DT_FixedDUR2,RV_OK,TK_NotStart,BEW/IN/GEN/5400,Camera Foundations,2547,6569.5,2474,216,0,216,72,216,0,0,0,,,,2016-06-13 07:00,2016-07-20 17:00,,2013-07-16 07:00,2013-08-22 08:00,2013-07-16 07:00,2013-08-22 08:00,2013-07-16 07:00,2013-08-22 08:00,,2016-06-13 07:00,2016-07-20 17:00,,PT_Normal,,,,,o3uxYQveZ06s9DfyXvYxzw,g/J3U6ON70qaDtS2PNXJyQ,,,N,0,0,,,2013-11-06 10:46,2013-11-12 18:24,admin,admin
648,84888,1296,11230,1423,1,0,N,N,N,CP_Drtn,TT_Task,DT_FixedDUR2,RV_OK,TK_NotStart,BEW/IN/GEN/5920,Traffic Signs RHS,2547,6335.5,621,225,0,225,54,225,0,0,0,,,,2016-06-12 07:00,2016-07-20 17:00,,2013-08-25 08:00,2013-09-29 07:30,2013-08-25 08:00,2013-09-29 07:30,2013-08-25 08:00,2013-09-29 07:30,,2016-06-12 07:00,2016-07-20 17:00,,PT_Normal,,,,,k2QVcBQLoUW271+7VQgnog,Uu8RpkZXt06KzyZwjDuVkg,,,N,0,0,,,2013-11-06 10:46,2013-11-12 18:28,admin,admin
649,84889,1296,11230,1423,1,0,N,N,N,CP_Drtn,TT_Task,DT_FixedDUR2,RV_OK,TK_NotStart,BEW/IN/GEN/5770,Road Markings RHS,2547,6353.5,621,216,0,216,54,216,0,0,0,,,,2016-06-13 07:00,2016-07-20 17:00,,2013-08-22 08:00,2013-09-25 07:30,2013-08-22 08:00,2013-09-25 07:30,2013-08-22 08:00,2013-09-25 07:30,,2016-06-13 07:00,2016-07-20 17:00,,PT_Normal,,,,,H87GcpcNJkWMLKXArkpdvg,iop1BwzJVEy9Y1ff64GnzQ,,,N,0,0,,,2013-11-06 10:46,2013-11-12 18:28,admin,admin
650,84890,1296,11234,1423,1,0,N,N,N,CP_Drtn,TT_Task,DT_FixedDUR2,RV_OK,TK_NotStart,BEW/IN/GEN/5410,Traffic Signs LHS,2547,6335.5,0,225,0,225,54,225,0,0,0,,,,2016-05-08 07:00,2016-06-09 17:00,,2013-07-16 07:00,2013-08-25 08:00,2013-07-16 07:00,2013-08-25 08:00,2013-07-16 07:00,2013-08-25 08:00,,2016-05-08 07:00,2016-06-09 17:00,,PT_Normal,,,,,IynA1/YbpEGhXUL7OVCw9g,QY9Q2eUmGE6U65/xpcOxkA,,,N,0,0,,,2013-11-06 10:46,2013-11-12 18:28,admin,admin
651,84891,1296,11234,1423,1,0,N,N,N,CP_Drtn,TT_Task,DT_FixedDUR2,RV_OK,TK_NotStart,BEW/IN/GEN/5420,Road Markings LHS,2547,6353.5,0,216,0,216,54,216,0,0,0,,,,2016-05-10 07:00,2016-06-12 17:00,,2013-07-16 07:00,2013-08-22 08:00,2013-07-16 07:00,2013-08-22 08:00,2013-07-16 07:00,2013-08-22 08:00,,2016-05-10 07:00,2016-06-12 17:00,,PT_Normal,,,,,UFMh2te9ekSimZGCukM4XQ,EYBi10j8CEuIf79mC+2DAg,,,N,0,0,,,2013-11-06 10:46,2013-11-12 18:28,admin,admin
652,84892,1296,11234,1423,1,0,N,N,N,CP_Drtn,TT_Task,DT_FixedDUR2,RV_OK,TK_NotStart,BEW/IN/GEN/5430,Flag Pole erection,2547,6569.5,621,216,0,216,54,216,0,0,0,,,,2016-06-13 07:00,2016-07-20 17:00,,2013-07-16 07:00,2013-08-22 08:00,2013-07-16 07:00,2013-08-22 08:00,2013-07-16 07:00,2013-08-22 08:00,,2016-06-13 07:00,2016-07-20 17:00,,PT_Normal,,,,,okvwaJP4xkG0h1zYhVk55g,g6aKjVnE3UK7TzRP2uHPDw,,,N,0,0,,,2013-11-06 10:46,2013-11-12 18:25,admin,admin
653,84893,1296,11234,1423,1,0,N,N,N,CP_Drtn,TT_Task,DT_FixedDUR2,RV_OK,TK_NotStart,BEW/IN/GEN/5440,Camera Foundations,2547,6569.5,2474,216,0,216,72,216,0,0,0,,,,2016-06-13 07:00,2016-07-20 17:00,,2013-07-16 07:00,2013-08-22 08:00,2013-07-16 07:00,2013-08-22 08:00,2013-07-16 07:00,2013-08-22 08:00,,2016-06-13 07:00,2016-07-20 17:00,,PT_Normal,,,,,5oaPvr6lVEiCXEKtHts18Q,g/J3U6ON70qaDtS2PNXJyQ,,,N,0,0,,,2013-11-06 10:46,2013-11-12 18:24,admin,admin
654,84894,1296,11234,1423,1,0,N,N,N,CP_Drtn,TT_Task,DT_FixedDUR2,RV_OK,TK_NotStart,BEW/IN/GEN/5930,Traffic Signs RHS,2547,6335.5,621,225,0,225,54,225,0,0,0,,,,2016-06-12 07:00,2016-07-20 17:00,,2013-08-25 08:00,2013-09-29 07:30,2013-08-25 08:00,2013-09-29 07:30,2013-08-25 08:00,2013-09-29 07:30,,2016-06-12 07:00,2016-07-20 17:00,,PT_Normal,,,,,t7RSAVMBokirOlT874BeCA,Uu8RpkZXt06KzyZwjDuVkg,,,N,0,0,,,2013-11-06 10:46,2013-11-12 18:28,admin,admin
655,84895,1296,11234,1423,1,0,N,N,N,CP_Drtn,TT_Task,DT_FixedDUR2,RV_OK,TK_NotStart,BEW/IN/GEN/5780,Road Markings RHS,2547,6353.5,621,216,0,216,54,216,0,0,0,,,,2016-06-13 07:00,2016-07-20 17:00,,2013-08-22 08:00,2013-09-25 07:30,2013-08-22 08:00,2013-09-25 07:30,2013-08-22 08:00,2013-09-25 07:30,,2016-06-13 07:00,2016-07-20 17:00,,PT_Normal,,,,,L+lT6ah3OEyf5lEFpu8GgA,iop1BwzJVEy9Y1ff64GnzQ,,,N,0,0,,,2013-11-06 10:46,2013-11-12 18:28,admin,admin
656,84896,1296,11080,1423,1,0,N,N,N,CP_Drtn,TT_Task,DT_FixedDUR2,RV_OK,TK_NotStart,BEW/IN/GEN/5450,Traffic Signs LHS,2547,6335.5,0,225,0,225,54,225,0,0,0,,,,2016-05-08 07:00,2016-06-09 17:00,,2013-07-16 07:00,2013-08-25 08:00,2013-07-16 07:00,2013-08-25 08:00,2013-07-16 07:00,2013-08-25 08:00,,2016-05-08 07:00,2016-06-09 17:00,,PT_Normal,,,,,08Q+Y09KSkaGI2UhKY7NlA,QY9Q2eUmGE6U65/xpcOxkA,,,N,0,0,,,2013-11-06 10:46,2013-11-12 18:28,admin,admin
657,84897,1296,11080,1423,1,0,N,N,N,CP_Drtn,TT_Task,DT_FixedDUR2,RV_OK,TK_NotStart,BEW/IN/GEN/5460,Road Markings LHS,2547,6353.5,0,216,0,216,54,216,0,0,0,,,,2016-05-10 07:00,2016-06-12 17:00,,2013-07-16 07:00,2013-08-22 08:00,2013-07-16 07:00,2013-08-22 08:00,2013-07-16 07:00,2013-08-22 08:00,,2016-05-10 07:00,2016-06-12 17:00,,PT_Normal,,,,,Zy11hHfiikemFWsjDnpTFQ,EYBi10j8CEuIf79mC+2DAg,,,N,0,0,,,2013-11-06 10:46,2013-11-12 18:28,admin,admin
658,84898,1296,11080,1423,1,0,N,N,N,CP_Drtn,TT_Task,DT_FixedDUR2,RV_OK,TK_NotStart,BEW/IN/GEN/5470,Flag Pole erection,2547,6569.5,621,216,0,216,54,216,0,0,0,,,,2016-06-13 07:00,2016-07-20 17:00,,2013-07-16 07:00,2013-08-22 08:00,2013-07-16 07:00,2013-08-22 08:00,2013-07-16 07:00,2013-08-22 08:00,,2016-06-13 07:00,2016-07-20 17:00,,PT_Normal,,,,,oau/8OYkTkKPocvfiWSBvQ,g6aKjVnE3UK7TzRP2uHPDw,,,N,0,0,,,2013-11-06 10:46,2013-11-12 18:25,admin,admin
659,84899,1296,11080,1423,1,0,N,N,N,CP_Drtn,TT_Task,DT_FixedDUR2,RV_OK,TK_NotStart,BEW/IN/GEN/5480,Camera Foundations,2547,6569.5,2474,216,0,216,72,216,0,0,0,,,,2016-06-13 07:00,2016-07-20 17:00,,2013-07-16 07:00,2013-08-22 08:00,2013-07-16 07:00,2013-08-22 08:00,2013-07-16 07:00,2013-08-22 08:00,,2016-06-13 07:00,2016-07-20 17:00,,PT_Normal,,,,,61mJ6SJ2f0KhhbsUB5FCHw,g/J3U6ON70qaDtS2PNXJyQ,,,N,0,0,,,2013-11-06 10:46,2013-11-12 18:24,admin,admin
660,84900,1296,11080,1423,1,0,N,N,N,CP_Drtn,TT_Task,DT_FixedDUR2,RV_OK,TK_NotStart,BEW/IN/GEN/5940,Traffic Signs RHS,2547,6335.5,621,225,0,225,54,225,0,0,0,,,,2016-06-12 07:00,2016-07-20 17:00,,2013-08-25 08:00,2013-09-29 07:30,2013-08-25 08:00,2013-09-29 07:30,2013-08-25 08:00,2013-09-29 07:30,,2016-06-12 07:00,2016-07-20 17:00,,PT_Normal,,,,,3hCUpR9mCUiJUj3Vhpx0PQ,Uu8RpkZXt06KzyZwjDuVkg,,,N,0,0,,,2013-11-06 10:46,2013-11-12 18:28,admin,admin
661,84901,1296,11080,1423,1,0,N,N,N,CP_Drtn,TT_Task,DT_FixedDUR2,RV_OK,TK_NotStart,BEW/IN/GEN/5790,Road Markings RHS,2547,6353.5,621,216,0,216,54,216,0,0,0,,,,2016-06-13 07:00,2016-07-20 17:00,,2013-08-22 08:00,2013-09-25 07:30,2013-08-22 08:00,2013-09-25 07:30,2013-08-22 08:00,2013-09-25 07:30,,2016-06-13 07:00,2016-07-20 17:00,,PT_Normal,,,,,2Nyy1NTq1UunxWwX3yjEmQ,iop1BwzJVEy9Y1ff64GnzQ,,,N,0,0,,,2013-11-06 10:46,2013-11-12 18:28,admin,admin
662,84902,1296,11079,1423,1,0,N,N,N,CP_Drtn,TT_Task,DT_FixedDUR2,RV_OK,TK_NotStart,BEW/IN/GEN/5490,Traffic Signs LHS,2547,5714.5,0,225,0,225,54,225,0,0,0,,,,2016-05-08 07:00,2016-06-09 17:00,,2013-10-27 16:30,2013-12-03 16:30,2013-10-27 16:30,2013-12-03 16:30,2013-10-27 16:30,2013-12-03 16:30,,2016-05-08 07:00,2016-06-09 17:00,,PT_Normal,,,,,aLhQqyKOVE+e0BDJoGim3w,QY9Q2eUmGE6U65/xpcOxkA,,,N,0,0,,,2013-11-06 10:46,2013-11-12 18:28,admin,admin
663,84903,1296,11079,1423,1,0,N,N,N,CP_Drtn,TT_Task,DT_FixedDUR2,RV_OK,TK_NotStart,BEW/IN/GEN/5500,Road Markings LHS,2547,5732.5,0,216,0,216,54,216,0,0,0,,,,2016-05-10 07:00,2016-06-12 17:00,,2013-10-27 16:30,2013-12-02 16:30,2013-10-27 16:30,2013-12-02 16:30,2013-10-27 16:30,2013-12-02 16:30,,2016-05-10 07:00,2016-06-12 17:00,,PT_Normal,,,,,VdD3iOFZKkqcqf8xrfV6yA,EYBi10j8CEuIf79mC+2DAg,,,N,0,0,,,2013-11-06 10:46,2013-11-12 18:28,admin,admin
664,84904,1296,11079,1423,1,0,N,N,N,CP_Drtn,TT_Task,DT_FixedDUR2,RV_OK,TK_NotStart,BEW/IN/GEN/5510,Flag Pole erection,2547,5948.5,0,216,0,216,54,216,0,0,0,,,,2016-06-13 07:00,2016-07-20 17:00,,2013-10-27 16:30,2013-12-02 16:30,2013-10-27 16:30,2013-12-02 16:30,2013-10-27 16:30,2013-12-02 16:30,,2016-06-13 07:00,2016-07-20 17:00,,PT_Normal,,,,,Bxn/QzrzZ0Sj8Dm7kpC1Fg,g6aKjVnE3UK7TzRP2uHPDw,,,N,0,0,,,2013-11-06 10:46,2013-11-12 18:25,admin,admin
665,84905,1296,11079,1423,1,0,N,N,N,CP_Drtn,TT_Task,DT_FixedDUR2,RV_OK,TK_NotStart,BEW/IN/GEN/5520,Camera Foundations,2547,5948.5,1853,216,0,216,72,216,0,0,0,,,,2016-06-13 07:00,2016-07-20 17:00,,2013-10-27 16:30,2013-12-02 16:30,2013-10-27 16:30,2013-12-02 16:30,2013-10-27 16:30,2013-12-02 16:30,,2016-06-13 07:00,2016-07-20 17:00,,PT_Normal,,,,,kmOApOk4hEyiEMv772aNkg,g/J3U6ON70qaDtS2PNXJyQ,,,N,0,0,,,2013-11-06 10:46,2013-11-12 18:24,admin,admin
666,84906,1296,11079,1423,1,0,N,N,N,CP_Drtn,TT_Task,DT_FixedDUR2,RV_OK,TK_NotStart,BEW/IN/GEN/5950,Traffic Signs RHS,2547,5714.5,0,225,0,225,54,225,0,0,0,,,,2016-06-12 07:00,2016-07-20 17:00,,2013-12-03 16:30,2014-01-08 16:30,2013-12-03 16:30,2014-01-08 16:30,2013-12-03 16:30,2014-01-08 16:30,,2016-06-12 07:00,2016-07-20 17:00,,PT_Normal,,,,,xRUnAIU+r0GOCtWknbIXJA,Uu8RpkZXt06KzyZwjDuVkg,,,N,0,0,,,2013-11-06 10:46,2013-11-12 18:28,admin,admin
667,84907,1296,11079,1423,1,0,N,N,N,CP_Drtn,TT_Task,DT_FixedDUR2,RV_OK,TK_NotStart,BEW/IN/GEN/5800,Road Markings RHS,2547,5732.5,0,216,0,216,54,216,0,0,0,,,,2016-06-13 07:00,2016-07-20 17:00,,2013-12-02 16:30,2014-01-06 16:30,2013-12-02 16:30,2014-01-06 16:30,2013-12-02 16:30,2014-01-06 16:30,,2016-06-13 07:00,2016-07-20 17:00,,PT_Normal,,,,,RnIyPSoEoEmTYYhbb2S99g,iop1BwzJVEy9Y1ff64GnzQ,,,N,0,0,,,2013-11-06 10:46,2013-11-12 18:28,admin,admin
668,84908,1296,11078,1423,1,0,N,N,N,CP_Drtn,TT_Task,DT_FixedDUR2,RV_OK,TK_NotStart,BEW/IN/GEN/5530,Traffic Signs LHS,2547,6335.5,0,225,0,225,54,225,0,0,0,,,,2016-05-08 07:00,2016-06-09 17:00,,2013-07-16 07:00,2013-08-25 08:00,2013-07-16 07:00,2013-08-25 08:00,2013-07-16 07:00,2013-08-25 08:00,,2016-05-08 07:00,2016-06-09 17:00,,PT_Normal,,,,,kCNAuUptuUipyHCa76s8fA,QY9Q2eUmGE6U65/xpcOxkA,,,N,0,0,,,2013-11-06 10:46,2013-11-12 18:28,admin,admin
669,84909,1296,11078,1423,1,0,N,N,N,CP_Drtn,TT_Task,DT_FixedDUR2,RV_OK,TK_NotStart,BEW/IN/GEN/5540,Road Markings LHS,2547,6353.5,0,216,0,216,54,216,0,0,0,,,,2016-05-10 07:00,2016-06-12 17:00,,2013-07-16 07:00,2013-08-22 08:00,2013-07-16 07:00,2013-08-22 08:00,2013-07-16 07:00,2013-08-22 08:00,,2016-05-10 07:00,2016-06-12 17:00,,PT_Normal,,,,,EAF/YhSud0KTgLy0GIfKTg,EYBi10j8CEuIf79mC+2DAg,,,N,0,0,,,2013-11-06 10:46,2013-11-12 18:28,admin,admin
670,84910,1296,11078,1423,1,0,N,N,N,CP_Drtn,TT_Task,DT_FixedDUR2,RV_OK,TK_NotStart,BEW/IN/GEN/5550,Flag Pole erection,2547,6569.5,621,216,0,216,54,216,0,0,0,,,,2016-06-13 07:00,2016-07-20 17:00,,2013-07-16 07:00,2013-08-22 08:00,2013-07-16 07:00,2013-08-22 08:00,2013-07-16 07:00,2013-08-22 08:00,,2016-06-13 07:00,2016-07-20 17:00,,PT_Normal,,,,,FRhBZLA20kG1VfvFMrz2Fg,g6aKjVnE3UK7TzRP2uHPDw,,,N,0,0,,,2013-11-06 10:46,2013-11-12 18:25,admin,admin
671,84911,1296,11078,1423,1,0,N,N,N,CP_Drtn,TT_Task,DT_FixedDUR2,RV_OK,TK_NotStart,BEW/IN/GEN/5560,Camera Foundations,2547,6569.5,2474,216,0,216,72,216,0,0,0,,,,2016-06-13 07:00,2016-07-20 17:00,,2013-07-16 07:00,2013-08-22 08:00,2013-07-16 07:00,2013-08-22 08:00,2013-07-16 07:00,2013-08-22 08:00,,2016-06-13 07:00,2016-07-20 17:00,,PT_Normal,,,,,7VkLmPfjO06F8pdxS80f5w,g/J3U6ON70qaDtS2PNXJyQ,,,N,0,0,,,2013-11-06 10:46,2013-11-12 18:24,admin,admin
672,84912,1296,11078,1423,1,0,N,N,N,CP_Drtn,TT_Task,DT_FixedDUR2,RV_OK,TK_NotStart,BEW/IN/GEN/5960,Traffic Signs RHS,2547,6335.5,621,225,0,225,54,225,0,0,0,,,,2016-06-12 07:00,2016-07-20 17:00,,2013-08-25 08:00,2013-09-29 07:30,2013-08-25 08:00,2013-09-29 07:30,2013-08-25 08:00,2013-09-29 07:30,,2016-06-12 07:00,2016-07-20 17:00,,PT_Normal,,,,,qvTsU9un/02HuQ5xBmAaCA,Uu8RpkZXt06KzyZwjDuVkg,,,N,0,0,,,2013-11-06 10:46,2013-11-12 18:28,admin,admin
673,84913,1296,11078,1423,1,0,N,N,N,CP_Drtn,TT_Task,DT_FixedDUR2,RV_OK,TK_NotStart,BEW/IN/GEN/5810,Road Markings RHS,2547,6353.5,621,216,0,216,54,216,0,0,0,,,,2016-06-13 07:00,2016-07-20 17:00,,2013-08-22 08:00,2013-09-25 07:30,2013-08-22 08:00,2013-09-25 07:30,2013-08-22 08:00,2013-09-25 07:30,,2016-06-13 07:00,2016-07-20 17:00,,PT_Normal,,,,,qXLbx03n2UmbWA43ZSlF4g,iop1BwzJVEy9Y1ff64GnzQ,,,N,0,0,,,2013-11-06 10:46,2013-11-12 18:28,admin,admin
674,84914,1296,10969,1423,1,0,N,N,N,CP_Phys,TT_Task,DT_FixedDUR2,RV_OK,TK_NotStart,BEW/UTL/GEN/1000,11 KV ducting works,2511,5391.5,5095,225,0,589.999996,144,225,0,0,0,,,,2016-06-30 07:00,2016-08-09 17:00,,2014-02-13 15:30,2014-03-20 15:30,2014-02-13 15:30,2014-03-20 15:30,2014-02-13 15:30,2014-03-20 15:30,,2016-06-30 07:00,2016-08-09 17:00,,PT_Normal,,,,,utTuTgbUCEuV6E+L1PGKrA,aEd4hHRINkuvEYbi+TJX0A,,,N,0,0,,,2013-11-06 12:09,2013-11-12 18:24,admin,admin
675,84915,1296,10969,1423,1,0,N,N,N,CP_Phys,TT_Task,DT_FixedDUR2,RV_OK,TK_NotStart,BEW/UTL/GEN/1010,33 KV ducting works,2511,5391.5,5095,225,0,589.999996,144,225,0,0,0,,,,2016-06-30 07:00,2016-08-09 17:00,,2014-02-13 15:30,2014-03-20 15:30,2014-02-13 15:30,2014-03-20 15:30,2014-02-13 15:30,2014-03-20 15:30,,2016-06-30 07:00,2016-08-09 17:00,,PT_Normal,,,,,Cfl4Bod8ykqjayj8sKxIlg,tXgtOLfWRUK2VrQlantU/w,,,N,0,0,,,2013-11-06 12:10,2013-11-12 18:24,admin,admin
676,84916,1296,10969,1423,1,0,N,N,N,CP_Phys,TT_Task,DT_FixedDUR2,RV_OK,TK_NotStart,BEW/UTL/GEN/1020,Irrigation ducts,2511,2331.5,2035,3285,0,3649.999996,463.999996,3285,0,0,0,,,,2015-02-26 07:00,2016-08-09 17:00,,2014-02-13 15:30,2015-08-02 16:30,2014-02-13 15:30,2015-08-02 16:30,2014-02-13 15:30,2015-08-02 16:30,,2015-02-26 07:00,2016-08-09 17:00,,PT_Normal,,,,,QfjNbeuHPE+aRbNpScVJRQ,tXgtOLfWRUK2VrQlantU/w,,,N,0,0,,,2013-11-06 12:11,2013-11-12 18:26,admin,admin
677,84917,1296,10969,1423,1,0,N,N,N,CP_Phys,TT_Task,DT_FixedDUR2,RV_OK,TK_NotStart,BEW/UTL/GEN/1030,Street Light Ducts,2511,2331.5,2035,3285,0,3649.999996,400.999996,3285,0,0,0,,,,2015-02-26 07:00,2016-08-09 17:00,,2014-02-13 15:30,2015-08-02 16:30,2014-02-13 15:30,2015-08-02 16:30,2014-02-13 15:30,2015-08-02 16:30,,2015-02-26 07:00,2016-08-09 17:00,,PT_Normal,,,,,Fygf+mgm10KTd7AMpuHe0A,Xb68dnZmXky+lVMDJ6xktA,,,N,0,0,,,2013-11-06 12:11,2013-11-12 18:28,admin,admin
678,84918,1296,11204,1423,1,0,N,N,N,CP_Phys,TT_Task,DT_FixedDUR2,RV_OK,TK_NotStart,BEW/1000,Preparation & Submission of Cross Sections,,4689.5,0,45,0,0,0,45,0,0,0,,,,2015-10-22 07:00,2015-10-28 17:00,,2013-09-19 16:30,2013-09-26 16:30,2013-09-19 16:30,2013-09-26 16:30,2013-09-19 16:30,2013-09-26 16:30,,2015-10-22 07:00,2015-10-28 17:00,,PT_Normal,,,,,I55BEhJIkkmW4/OMX6MAGQ,JGFUXBS5rEa6K9LHXSGQ2A,,,N,0,0,,,2013-11-08 12:28,2013-11-11 23:03,admin,admin
679,84919,1296,11204,1422,1,0,N,N,N,CP_Drtn,TT_Task,DT_FixedDUR2,RV_OK,TK_NotStart,BEW/1010,Approval of Cross sections,,6858.5,179,189,0,0,0,189,0,0,0,,,,2015-10-29 07:00,2015-11-18 17:00,,2013-09-26 16:30,2013-10-17 16:30,2013-09-26 16:30,2013-10-17 16:30,2013-09-26 16:30,2013-10-17 16:30,,2015-10-29 07:00,2015-11-18 17:00,,PT_Normal,,,,,g+3r4mSW+kaQPIBqSWEYDQ,,,,N,0,0,,,2013-11-08 12:30,2013-11-11 14:24,admin,admin
680,84920,1296,11168,1423,1,0,N,N,N,CP_Phys,TT_Task,DT_FixedDUR2,RV_OK,TK_NotStart,BEW/1020,Preparation & Submission of Cross Sections,,6174.5,0,225,0,0,0,225,0,0,0,,,,2016-06-28 07:00,2016-08-07 17:00,,2013-10-03 16:30,2013-11-12 15:30,2013-10-03 16:30,2013-11-12 15:30,2013-10-03 16:30,2013-11-12 15:30,,2016-06-28 07:00,2016-08-07 17:00,,PT_Normal,,,,,5N19fWE3o0i+iHQdt8RMUQ,GTlJq59KOEyYQVF779kZ5g,,,N,0,0,,,2013-11-08 12:48,2013-11-11 23:03,admin,admin
681,84921,1296,11168,1422,1,0,N,N,N,CP_Drtn,TT_Task,DT_FixedDUR2,RV_OK,TK_NotStart,BEW/1030,Approval of Cross sections,,8992.5,8992.5,189,0,0,0,189,0,0,0,,,,2016-08-08 07:00,2016-08-28 17:00,,2013-11-12 15:30,2013-12-03 15:30,2013-11-12 15:30,2013-12-03 15:30,2013-11-12 15:30,2013-12-03 15:30,,2016-08-08 07:00,2016-08-28 17:00,,PT_Normal,,,,,Qy4gwqdR9Um+QiTG1k40gw,chOC8o45GUGsV8+7cQJP0w,,,N,0,0,,,2013-11-08 12:48,2013-11-11 18:46,admin,admin
682,84922,1296,11097,1423,1,0,N,N,N,CP_Phys,TT_Task,DT_FixedDUR2,RV_OK,TK_NotStart,BEW/1040,Preparation & Submission of Cross Sections,,6219.5,0,225,0,0,0,225,0,0,0,,,,2016-06-28 07:00,2016-08-07 17:00,,2013-09-26 16:30,2013-11-04 15:30,2013-09-26 16:30,2013-11-04 15:30,2013-09-26 16:30,2013-11-04 15:30,,2016-06-28 07:00,2016-08-07 17:00,,PT_Normal,,,,,5FB+/pCoAEuVzRnAzwKK4Q,fb7Lf6nS20qVyRRER5N2mw,,,N,0,0,,,2013-11-08 12:48,2013-11-12 11:04,admin,admin
683,84923,1296,11097,1422,1,0,N,N,N,CP_Drtn,TT_Task,DT_FixedDUR2,RV_OK,TK_NotStart,BEW/1050,Approval of Cross sections,,9064.5,9064.5,189,0,0,0,189,0,0,0,,,,2016-08-08 07:00,2016-08-28 17:00,,2013-11-04 15:30,2013-11-25 15:30,2013-11-04 15:30,2013-11-25 15:30,2013-11-04 15:30,2013-11-25 15:30,,2016-08-08 07:00,2016-08-28 17:00,,PT_Normal,,,,,aczt2SI3gEeHomDPWwexCw,2Syi2UocVkKq6VQptEjwBg,,,N,0,0,,,2013-11-08 12:48,2013-11-12 11:04,admin,admin
684,84924,1296,11106,1423,1,0,N,N,N,CP_Phys,TT_Task,DT_FixedDUR2,RV_OK,TK_NotStart,BEW/1060,Preparation & Submission of Cross Sections,,5904.5,0,225,0,0,0,225,0,0,0,,,,2016-06-28 07:00,2016-08-07 17:00,,2013-11-20 15:30,2013-12-25 15:30,2013-11-20 15:30,2013-12-25 15:30,2013-11-20 15:30,2013-12-25 15:30,,2016-06-28 07:00,2016-08-07 17:00,,PT_Normal,,,,,I1CoJnhH5UKoVgBcXupYXA,fb7Lf6nS20qVyRRER5N2mw,,,N,0,0,,,2013-11-08 12:49,2013-11-12 11:04,admin,admin
685,84925,1296,11106,1422,1,0,N,N,N,CP_Drtn,TT_Task,DT_FixedDUR2,RV_OK,TK_NotStart,BEW/1070,Approval of Cross sections,,8605.5,8605.5,189,0,0,0,189,0,0,0,,,,2016-08-08 07:00,2016-08-28 17:00,,2013-12-25 15:30,2014-01-15 15:30,2013-12-25 15:30,2014-01-15 15:30,2013-12-25 15:30,2014-01-15 15:30,,2016-08-08 07:00,2016-08-28 17:00,,PT_Normal,,,,,Ik/QaHPcZUuX4tLQuDtGtQ,2Syi2UocVkKq6VQptEjwBg,,,N,0,0,,,2013-11-08 12:49,2013-11-12 11:04,admin,admin
686,84926,1296,11176,1423,1,0,N,N,N,CP_Phys,TT_Task,DT_FixedDUR2,RV_OK,TK_NotStart,BEW/1080,Preparation & Submission of Cross Sections,,5814.5,0,225,0,0,0,225,0,0,0,,,,2016-06-28 07:00,2016-08-07 17:00,,2013-12-04 15:30,2014-01-09 15:30,2013-12-04 15:30,2014-01-09 15:30,2013-12-04 15:30,2014-01-09 15:30,,2016-06-28 07:00,2016-08-07 17:00,,PT_Normal,,,,,DWHPdySF2Ua5ILdbAA2NGw,fb7Lf6nS20qVyRRER5N2mw,,,N,0,0,,,2013-11-08 12:49,2013-11-12 11:04,admin,admin
687,84927,1296,11176,1422,1,0,N,N,N,CP_Drtn,TT_Task,DT_FixedDUR2,RV_OK,TK_NotStart,BEW/1090,Approval of Cross sections,,8470.5,8470.5,189,0,0,0,189,0,0,0,,,,2016-08-08 07:00,2016-08-28 17:00,,2014-01-09 15:30,2014-01-30 15:30,2014-01-09 15:30,2014-01-30 15:30,2014-01-09 15:30,2014-01-30 15:30,,2016-08-08 07:00,2016-08-28 17:00,,PT_Normal,,,,,An2FVEDOmkWAXdAaLpM9OQ,2Syi2UocVkKq6VQptEjwBg,,,N,0,0,,,2013-11-08 12:49,2013-11-12 11:04,admin,admin
688,84928,1296,11178,1423,1,0,N,N,N,CP_Phys,TT_Task,DT_FixedDUR2,RV_OK,TK_NotStart,BEW/1100,Preparation & Submission of Cross Sections,,4626.5,0,225,0,0,0,225,0,0,0,,,,2015-12-24 07:00,2016-01-27 17:00,,2013-12-04 15:30,2014-01-09 15:30,2013-12-04 15:30,2014-01-09 15:30,2013-12-04 15:30,2014-01-09 15:30,,2015-12-24 07:00,2016-01-27 17:00,,PT_Normal,,,,,X/b7yZWM90iQcFvWP2eglg,fb7Lf6nS20qVyRRER5N2mw,,,N,0,0,,,2013-11-08 12:49,2013-11-12 11:04,admin,admin
689,84929,1296,11178,1422,1,0,N,N,N,CP_Drtn,TT_Task,DT_FixedDUR2,RV_OK,TK_NotStart,BEW/1110,Approval of Cross sections,,6733.5,0,189,0,0,0,189,0,0,0,,,,2016-01-28 07:00,2016-02-17 17:00,,2014-01-09 15:30,2014-01-30 15:30,2014-01-09 15:30,2014-01-30 15:30,2014-01-09 15:30,2014-01-30 15:30,,2016-01-28 07:00,2016-02-17 17:00,,PT_Normal,,,,,LU+5Qosyo0CsE0XpAdMK0A,2Syi2UocVkKq6VQptEjwBg,,,N,0,0,,,2013-11-08 12:49,2013-11-12 11:04,admin,admin
690,84930,1296,11180,1423,1,0,N,N,N,CP_Phys,TT_Task,DT_FixedDUR2,RV_OK,TK_NotStart,BEW/1120,Preparation & Submission of Cross Sections,,4104.5,0,225,0,0,0,225,0,0,0,,,,2015-10-29 07:00,2015-12-03 17:00,,2014-01-02 15:30,2014-02-09 15:30,2014-01-02 15:30,2014-02-09 15:30,2014-01-02 15:30,2014-02-09 15:30,,2015-10-29 07:00,2015-12-03 17:00,,PT_Normal,,,,,Ysk4K/AxLUmcETE8FJOt9A,fb7Lf6nS20qVyRRER5N2mw,,,N,0,0,,,2013-11-08 12:49,2013-11-11 23:03,admin,admin
691,84931,1296,11180,1422,1,0,N,N,N,CP_Drtn,TT_Task,DT_FixedDUR2,RV_OK,TK_NotStart,BEW/1130,Approval of Cross sections,,5977.5,0,189,0,0,0,189,0,0,0,,,,2015-12-06 07:00,2015-12-26 17:00,,2014-02-09 15:30,2014-03-02 15:30,2014-02-09 15:30,2014-03-02 15:30,2014-02-09 15:30,2014-03-02 15:30,,2015-12-06 07:00,2015-12-26 17:00,,PT_Normal,,,,,dL7LKbtSn02U982UEXDHxQ,2Syi2UocVkKq6VQptEjwBg,,,N,0,0,,,2013-11-08 12:49,2013-11-11 18:46,admin,admin
692,84932,1296,11181,1423,1,0,N,N,N,CP_Phys,TT_Task,DT_FixedDUR2,RV_OK,TK_NotStart,BEW/1140,Preparation & Submission of Cross Sections,,5634.5,0,225,0,0,0,225,0,0,0,,,,2016-06-28 07:00,2016-08-07 17:00,,2014-01-02 15:30,2014-02-09 15:30,2014-01-02 15:30,2014-02-09 15:30,2014-01-02 15:30,2014-02-09 15:30,,2016-06-28 07:00,2016-08-07 17:00,,PT_Normal,,,,,O6LtlnlOIkCtQBwbzRhpWA,fb7Lf6nS20qVyRRER5N2mw,,,N,0,0,,,2013-11-08 12:49,2013-11-11 23:03,admin,admin
693,84933,1296,11181,1422,1,0,N,N,N,CP_Drtn,TT_Task,DT_FixedDUR2,RV_OK,TK_NotStart,BEW/1150,Approval of Cross sections,,8191.5,8191.5,189,0,0,0,189,0,0,0,,,,2016-08-08 07:00,2016-08-28 17:00,,2014-02-09 15:30,2014-03-02 15:30,2014-02-09 15:30,2014-03-02 15:30,2014-02-09 15:30,2014-03-02 15:30,,2016-08-08 07:00,2016-08-28 17:00,,PT_Normal,,,,,MAibHgxpFkq4Gsf7MOeTrw,2Syi2UocVkKq6VQptEjwBg,,,N,0,0,,,2013-11-08 12:49,2013-11-11 18:46,admin,admin
694,84934,1296,11197,1423,1,0,N,N,N,CP_Phys,TT_Task,DT_FixedDUR2,RV_OK,TK_NotStart,BEW/1160,Preparation & Submission of Cross Sections,,5841.5,0,225,0,0,0,225,0,0,0,,,,2016-06-05 07:00,2016-07-13 17:00,,2013-11-04 15:30,2013-12-11 15:30,2013-11-04 15:30,2013-12-11 15:30,2013-11-04 15:30,2013-12-11 15:30,,2016-06-05 07:00,2016-07-13 17:00,,PT_Normal,,,,,nzMxSBtYvUukM0OAsawcMQ,fb7Lf6nS20qVyRRER5N2mw,,,N,0,0,,,2013-11-08 12:49,2013-11-12 10:59,admin,admin
695,84935,1296,11197,1422,1,0,N,N,N,CP_Drtn,TT_Task,DT_FixedDUR2,RV_OK,TK_NotStart,BEW/1170,Review and reply by Engineer,,8506.5,1.5,189,0,0,0,189,0,0,0,,,,2016-07-14 07:00,2016-08-03 17:00,,2013-12-11 15:30,2014-01-01 15:30,2013-12-11 15:30,2014-01-01 15:30,2013-12-11 15:30,2014-01-01 15:30,,2016-07-14 07:00,2016-08-03 17:00,,PT_Normal,,,,,cDZZ7/Q7ykGY6xjw5UXifQ,2Syi2UocVkKq6VQptEjwBg,,,N,0,0,,,2013-11-08 12:49,2013-11-12 10:59,admin,admin
696,84936,1296,11197,1423,1,0,N,N,N,CP_Phys,TT_Task,DT_FixedDUR2,RV_OK,TK_NotStart,BEW/1180,Re- Submission of Cross Sections,,5849,0,63,0,0,0,63,0,0,0,,,,2016-08-04 07:00,2016-08-14 17:00,,2014-01-02 07:00,2014-01-12 17:00,2014-01-02 07:00,2014-01-12 17:00,2014-01-02 07:00,2014-01-12 17:00,,2016-08-04 07:00,2016-08-14 17:00,,PT_Normal,,,,,hH+VYjm3AU+uQbJ52BnEeA,A0Wou9Qp3kyhqpZva5Su0A,,,N,0,0,,,2013-11-08 12:50,2013-11-12 10:59,admin,admin
697,84937,1296,11197,1422,1,0,N,N,N,CP_Drtn,TT_Task,DT_FixedDUR2,RV_OK,TK_NotStart,BEW/1190,Approval of Cross sections,,8505,8505,126,0,0,0,126,0,0,0,,,,2016-08-15 07:00,2016-08-28 17:00,,2014-01-13 07:00,2014-01-26 17:00,2014-01-13 07:00,2014-01-26 17:00,2014-01-13 07:00,2014-01-26 17:00,,2016-08-15 07:00,2016-08-28 17:00,,PT_Normal,,,,,9EwruGWZXUGNsLXeE8z8vQ,5ErNqy1W2UG+Eb5aIU5ZkQ,,,N,0,0,,,2013-11-08 12:50,2013-11-12 10:59,admin,admin
698,84938,1296,11104,1423,1,0,N,N,N,CP_Phys,TT_Task,DT_FixedDUR2,RV_OK,TK_NotStart,BEW/1200,Preparation & Submission of Cross Sections,,5841.5,0,225,0,0,0,225,0,0,0,,,,2016-06-05 07:00,2016-07-13 17:00,,2013-11-04 15:30,2013-12-11 15:30,2013-11-04 15:30,2013-12-11 15:30,2013-11-04 15:30,2013-12-11 15:30,,2016-06-05 07:00,2016-07-13 17:00,,PT_Normal,,,,,ZTfnml0b00uWj5xajY0ekw,A0Wou9Qp3kyhqpZva5Su0A,,,N,0,0,,,2013-11-08 12:51,2013-11-11 23:03,admin,admin
699,84939,1296,11104,1422,1,0,N,N,N,CP_Drtn,TT_Task,DT_FixedDUR2,RV_OK,TK_NotStart,BEW/1210,Review and reply by Engineer,,8506.5,1.5,189,0,0,0,189,0,0,0,,,,2016-07-14 07:00,2016-08-03 17:00,,2013-12-11 15:30,2014-01-01 15:30,2013-12-11 15:30,2014-01-01 15:30,2013-12-11 15:30,2014-01-01 15:30,,2016-07-14 07:00,2016-08-03 17:00,,PT_Normal,,,,,jzdixzGbv0684vk+8CS8yw,JPmta1qvekmkB9F3rsNK2w,,,N,0,0,,,2013-11-08 12:51,2013-11-11 11:35,admin,admin
700,84940,1296,11104,1423,1,0,N,N,N,CP_Phys,TT_Task,DT_FixedDUR2,RV_OK,TK_NotStart,BEW/1220,Re- Submission of Cross Sections,,5849,0,63,0,0,0,63,0,0,0,,,,2016-08-04 07:00,2016-08-14 17:00,,2014-01-02 07:00,2014-01-12 17:00,2014-01-02 07:00,2014-01-12 17:00,2014-01-02 07:00,2014-01-12 17:00,,2016-08-04 07:00,2016-08-14 17:00,,PT_Normal,,,,,o11tHBzj5UWodhQWPan4lA,XyGkRdckukqgN63HSUy6lA,,,N,0,0,,,2013-11-08 12:51,2013-11-11 23:04,admin,admin
701,84941,1296,11104,1422,1,0,N,N,N,CP_Drtn,TT_Task,DT_FixedDUR2,RV_OK,TK_NotStart,BEW/1230,Approval of Cross sections,,8505,8505,126,0,0,0,126,0,0,0,,,,2016-08-15 07:00,2016-08-28 17:00,,2014-01-13 07:00,2014-01-26 17:00,2014-01-13 07:00,2014-01-26 17:00,2014-01-13 07:00,2014-01-26 17:00,,2016-08-15 07:00,2016-08-28 17:00,,PT_Normal,,,,,gh2eQayBv06qx9mVwLw3jg,+cNJNYa5j0qKhSO4TKGCBw,,,N,0,0,,,2013-11-08 12:51,2013-11-11 18:46,admin,admin
702,84942,1296,11206,1423,1,0,N,N,N,CP_Phys,TT_Task,DT_FixedDUR2,RV_OK,TK_NotStart,BEW/1240,Preparation & Submission of Cross Sections,,5571.5,0,225,0,0,0,225,0,0,0,,,,2016-06-05 07:00,2016-07-13 17:00,,2013-12-18 15:30,2014-01-26 15:30,2013-12-18 15:30,2014-01-26 15:30,2013-12-18 15:30,2014-01-26 15:30,,2016-06-05 07:00,2016-07-13 17:00,,PT_Normal,,,,,Ea+9PjRPY0eGdinxo8AfMA,A0Wou9Qp3kyhqpZva5Su0A,,,N,0,0,,,2013-11-08 12:51,2013-11-12 11:04,admin,admin
703,84943,1296,11206,1422,1,0,N,N,N,CP_Drtn,TT_Task,DT_FixedDUR2,RV_OK,TK_NotStart,BEW/1250,Review and reply by Engineer,,8092.5,0,189,0,0,0,189,0,0,0,,,,2016-07-14 07:00,2016-08-03 17:00,,2014-01-26 15:30,2014-02-16 15:30,2014-01-26 15:30,2014-02-16 15:30,2014-01-26 15:30,2014-02-16 15:30,,2016-07-14 07:00,2016-08-03 17:00,,PT_Normal,,,,,dLC43voyRkiRAYWZTzt4Aw,JPmta1qvekmkB9F3rsNK2w,,,N,0,0,,,2013-11-08 12:51,2013-11-12 11:04,admin,admin
704,84944,1296,11206,1423,1,0,N,N,N,CP_Phys,TT_Task,DT_FixedDUR2,RV_OK,TK_NotStart,BEW/1260,Re- Submission of Cross Sections,,5571.5,0,63,0,0,0,63,0,0,0,,,,2016-08-04 07:00,2016-08-14 17:00,,2014-02-16 15:30,2014-02-25 15:30,2014-02-16 15:30,2014-02-25 15:30,2014-02-16 15:30,2014-02-25 15:30,,2016-08-04 07:00,2016-08-14 17:00,,PT_Normal,,,,,o4UAtL4ggE2BvxMdvybrYA,XyGkRdckukqgN63HSUy6lA,,,N,0,0,,,2013-11-08 12:51,2013-11-12 11:04,admin,admin
705,84945,1296,11206,1422,1,0,N,N,N,CP_Drtn,TT_Task,DT_FixedDUR2,RV_OK,TK_NotStart,BEW/1270,Approval of Cross sections,,8110.5,8110.5,126,0,0,0,126,0,0,0,,,,2016-08-15 07:00,2016-08-28 17:00,,2014-02-25 15:30,2014-03-11 15:30,2014-02-25 15:30,2014-03-11 15:30,2014-02-25 15:30,2014-03-11 15:30,,2016-08-15 07:00,2016-08-28 17:00,,PT_Normal,,,,,ugs37RTLb0SmByBaT9Qh6A,+cNJNYa5j0qKhSO4TKGCBw,,,N,0,0,,,2013-11-08 12:51,2013-11-12 11:04,admin,admin
706,84946,1296,11096,1423,1,0,N,N,N,CP_Phys,TT_Task,DT_FixedDUR2,RV_OK,TK_NotStart,BEW/1280,Preparation & Submission of shopdrawings,,5049.5,0,189,0,0,0,189,0,0,0,,,,2016-01-04 07:00,2016-02-01 17:00,,2013-10-03 16:30,2013-11-06 15:30,2013-10-03 16:30,2013-11-06 15:30,2013-10-03 16:30,2013-11-06 15:30,,2016-01-04 07:00,2016-02-01 17:00,,PT_Normal,,,,,F7xyO/0TeUKMA+iqpEvLxg,Fo+UoJkRUUK5jWcVZAtPHg,,,N,0,0,,,2013-11-08 12:52,2013-11-11 23:03,admin,admin
707,84947,1296,11096,1423,1,0,N,N,N,CP_Phys,TT_Task,DT_FixedDUR2,RV_OK,TK_NotStart,BEW/1290,Re-Submission of shopdrawings,,5049.5,0,63,0,0,0,63,0,0,0,,,,2016-02-09 07:00,2016-02-17 17:00,,2013-11-13 15:30,2013-11-25 15:30,2013-11-13 15:30,2013-11-25 15:30,2013-11-13 15:30,2013-11-25 15:30,,2016-02-09 07:00,2016-02-17 17:00,,PT_Normal,,,,,T5+11fq8j0ayrSiqBpyoTg,orPMRFBfCEC6y6NfnLwPEw,,,N,0,0,,,2013-11-08 12:52,2013-11-11 23:04,admin,admin
708,84948,1296,11096,1422,1,0,N,N,N,CP_Drtn,TT_Task,DT_FixedDUR2,RV_OK,TK_NotStart,BEW/1300,Review and reply by Engineer,,7354.5,0,63,0,0,0,63,0,0,0,,,,2016-02-02 07:00,2016-02-08 17:00,,2013-11-06 15:30,2013-11-13 15:30,2013-11-06 15:30,2013-11-13 15:30,2013-11-06 15:30,2013-11-13 15:30,,2016-02-02 07:00,2016-02-08 17:00,,PT_Normal,,,,,4rcB0WMrBEue382XbMLq/g,Nbeo7jZfHU2TC2rc3IGbmA,,,N,0,0,,,2013-11-08 12:53,2013-11-11 14:24,admin,admin
709,84949,1296,11096,1422,1,0,N,N,N,CP_Drtn,TT_Task,DT_FixedDUR2,RV_OK,TK_NotStart,BEW/1310,Approval of Shop Drawings,,7327.5,684,63,0,0,0,63,0,0,0,,,,2016-02-18 07:00,2016-02-24 17:00,,2013-11-25 15:30,2013-12-02 15:30,2013-11-25 15:30,2013-12-02 15:30,2013-11-25 15:30,2013-12-02 15:30,,2016-02-18 07:00,2016-02-24 17:00,,PT_Normal,,,,,aO1hJ0BVIUax7/5dJ6U/7Q,r8XYfyi/GkCPvxl6rI+rgA,,,N,0,0,,,2013-11-08 12:53,2013-11-11 14:24,admin,admin
710,84950,1296,11139,1423,1,0,N,N,N,CP_Phys,TT_Task,DT_FixedDUR2,RV_OK,TK_NotStart,BEW/1320,Preparation & Submission of shopdrawings,,6192.5,0,189,0,0,0,189,0,0,0,,,,2016-06-30 07:00,2016-08-03 17:00,,2013-10-03 16:30,2013-11-06 15:30,2013-10-03 16:30,2013-11-06 15:30,2013-10-03 16:30,2013-11-06 15:30,,2016-06-30 07:00,2016-08-03 17:00,,PT_Normal,,,,,H2xoZYCQvEe1MG/xH/v2kg,orPMRFBfCEC6y6NfnLwPEw,,,N,0,0,,,2013-11-08 12:56,2013-11-12 11:04,admin,admin
711,84951,1296,11139,1423,1,0,N,N,N,CP_Phys,TT_Task,DT_FixedDUR2,RV_OK,TK_NotStart,BEW/1340,Re-Submission of shopdrawings,,6192.5,0,63,0,0,0,63,0,0,0,,,,2016-08-11 07:00,2016-08-21 17:00,,2013-11-13 15:30,2013-11-25 15:30,2013-11-13 15:30,2013-11-25 15:30,2013-11-13 15:30,2013-11-25 15:30,,2016-08-11 07:00,2016-08-21 17:00,,PT_Normal,,,,,5YcusBhOi0myC4FtaJFpFA,+srZQxInR024EBgbrC9p8g,,,N,0,0,,,2013-11-08 12:56,2013-11-12 11:04,admin,admin
712,84952,1296,11139,1422,1,0,N,N,N,CP_Drtn,TT_Task,DT_FixedDUR2,RV_OK,TK_NotStart,BEW/1330,Review and reply by Engineer,,9010.5,0,63,0,0,0,63,0,0,0,,,,2016-08-04 07:00,2016-08-10 17:00,,2013-11-06 15:30,2013-11-13 15:30,2013-11-06 15:30,2013-11-13 15:30,2013-11-06 15:30,2013-11-13 15:30,,2016-08-04 07:00,2016-08-10 17:00,,PT_Normal,,,,,1pV6D74yC0KCufk3+llrWw,sI7holoeuEG4q9cExmSOpQ,,,N,0,0,,,2013-11-08 12:56,2013-11-12 11:04,admin,admin
713,84953,1296,11139,1422,1,0,N,N,N,CP_Drtn,TT_Task,DT_FixedDUR2,RV_OK,TK_NotStart,BEW/1350,Approval of Shop Drawings,,9001.5,9001.5,63,0,0,0,63,0,0,0,,,,2016-08-22 07:00,2016-08-28 17:00,,2013-11-25 15:30,2013-12-02 15:30,2013-11-25 15:30,2013-12-02 15:30,2013-11-25 15:30,2013-12-02 15:30,,2016-08-22 07:00,2016-08-28 17:00,,PT_Normal,,,,,Jh2s8oy8Jk+6TFb8K2sxZw,8zc9QSoP1UqTkoO5JMEdCw,,,N,0,0,,,2013-11-08 12:56,2013-11-12 11:04,admin,admin
714,84954,1296,11099,1423,1,0,N,N,N,CP_Phys,TT_Task,DT_FixedDUR2,RV_OK,TK_NotStart,BEW/1360,Preparation & Submission of shopdrawings,,6102.5,0,189,0,0,0,189,0,0,0,,,,2016-06-30 07:00,2016-08-03 17:00,,2013-10-21 15:30,2013-11-21 15:30,2013-10-21 15:30,2013-11-21 15:30,2013-10-21 15:30,2013-11-21 15:30,,2016-06-30 07:00,2016-08-03 17:00,,PT_Normal,,,,,ieEGZPzUokyyYfe+e4Xhjg,orPMRFBfCEC6y6NfnLwPEw,,,N,0,0,,,2013-11-08 12:56,2013-11-11 23:03,admin,admin
715,84955,1296,11099,1423,1,0,N,N,N,CP_Phys,TT_Task,DT_FixedDUR2,RV_OK,TK_NotStart,BEW/1380,Re-Submission of shopdrawings,,6102.5,0,63,0,0,0,63,0,0,0,,,,2016-08-11 07:00,2016-08-21 17:00,,2013-11-28 15:30,2013-12-09 15:30,2013-11-28 15:30,2013-12-09 15:30,2013-11-28 15:30,2013-12-09 15:30,,2016-08-11 07:00,2016-08-21 17:00,,PT_Normal,,,,,4JEjPp43OUSeGN2+Ccb0ww,+srZQxInR024EBgbrC9p8g,,,N,0,0,,,2013-11-08 12:56,2013-11-11 23:04,admin,admin
716,84956,1296,11099,1422,1,0,N,N,N,CP_Drtn,TT_Task,DT_FixedDUR2,RV_OK,TK_NotStart,BEW/1370,Review and reply by Engineer,,8875.5,0,63,0,0,0,63,0,0,0,,,,2016-08-04 07:00,2016-08-10 17:00,,2013-11-21 15:30,2013-11-28 15:30,2013-11-21 15:30,2013-11-28 15:30,2013-11-21 15:30,2013-11-28 15:30,,2016-08-04 07:00,2016-08-10 17:00,,PT_Normal,,,,,Qdcorq1wa0CTjjW7dNKGCQ,sI7holoeuEG4q9cExmSOpQ,,,N,0,0,,,2013-11-08 12:56,2013-11-11 18:49,admin,admin
717,84957,1296,11099,1422,1,0,N,N,N,CP_Drtn,TT_Task,DT_FixedDUR2,RV_OK,TK_NotStart,BEW/1390,Approval of Shop Drawings,,8875.5,8875.5,63,0,0,0,63,0,0,0,,,,2016-08-22 07:00,2016-08-28 17:00,,2013-12-09 15:30,2013-12-16 15:30,2013-12-09 15:30,2013-12-16 15:30,2013-12-09 15:30,2013-12-16 15:30,,2016-08-22 07:00,2016-08-28 17:00,,PT_Normal,,,,,tnCK1i+ngkGsTsOgQuePvA,8zc9QSoP1UqTkoO5JMEdCw,,,N,0,0,,,2013-11-08 12:56,2013-11-11 18:49,admin,admin
718,84958,1296,11169,1423,1,0,N,N,N,CP_Phys,TT_Task,DT_FixedDUR2,RV_OK,TK_NotStart,BEW/1400,Preparation & Submission of shopdrawings,,6012.5,0,189,0,0,0,189,0,0,0,,,,2016-06-30 07:00,2016-08-03 17:00,,2013-11-04 15:30,2013-12-05 15:30,2013-11-04 15:30,2013-12-05 15:30,2013-11-04 15:30,2013-12-05 15:30,,2016-06-30 07:00,2016-08-03 17:00,,PT_Normal,,,,,p+rJ1pPtgE2SEvIYPvamqw,orPMRFBfCEC6y6NfnLwPEw,,,N,0,0,,,2013-11-08 12:56,2013-11-12 11:04,admin,admin
719,84959,1296,11169,1423,1,0,N,N,N,CP_Phys,TT_Task,DT_FixedDUR2,RV_OK,TK_NotStart,BEW/1420,Re-Submission of shopdrawings,,6012.5,0,63,0,0,0,63,0,0,0,,,,2016-08-11 07:00,2016-08-21 17:00,,2013-12-12 15:30,2013-12-23 15:30,2013-12-12 15:30,2013-12-23 15:30,2013-12-12 15:30,2013-12-23 15:30,,2016-08-11 07:00,2016-08-21 17:00,,PT_Normal,,,,,0LMcrX50lE2zLZhp+7nxYA,+srZQxInR024EBgbrC9p8g,,,N,0,0,,,2013-11-08 12:56,2013-11-12 11:04,admin,admin
720,84960,1296,11169,1422,1,0,N,N,N,CP_Drtn,TT_Task,DT_FixedDUR2,RV_OK,TK_NotStart,BEW/1410,Review and reply by Engineer,,8749.5,0,63,0,0,0,63,0,0,0,,,,2016-08-04 07:00,2016-08-10 17:00,,2013-12-05 15:30,2013-12-12 15:30,2013-12-05 15:30,2013-12-12 15:30,2013-12-05 15:30,2013-12-12 15:30,,2016-08-04 07:00,2016-08-10 17:00,,PT_Normal,,,,,O0noPKfRuESqMAERWLHtbg,sI7holoeuEG4q9cExmSOpQ,,,N,0,0,,,2013-11-08 12:56,2013-11-12 11:04,admin,admin
721,84961,1296,11169,1422,1,0,N,N,N,CP_Drtn,TT_Task,DT_FixedDUR2,RV_OK,TK_NotStart,BEW/1430,Approval of Shop Drawings,,8749.5,8749.5,63,0,0,0,63,0,0,0,,,,2016-08-22 07:00,2016-08-28 17:00,,2013-12-23 15:30,2013-12-30 15:30,2013-12-23 15:30,2013-12-30 15:30,2013-12-23 15:30,2013-12-30 15:30,,2016-08-22 07:00,2016-08-28 17:00,,PT_Normal,,,,,kiGyB+uP2Uu7To/T5Hx3eQ,8zc9QSoP1UqTkoO5JMEdCw,,,N,0,0,,,2013-11-08 12:56,2013-11-12 11:04,admin,admin
722,84962,1296,11212,1423,1,0,N,N,N,CP_Phys,TT_Task,DT_FixedDUR2,RV_OK,TK_NotStart,BEW/1440,Preparation & Submission of shopdrawings,,6012.5,0,189,0,0,0,189,0,0,0,,,,2016-06-30 07:00,2016-08-03 17:00,,2013-11-04 15:30,2013-12-05 15:30,2013-11-04 15:30,2013-12-05 15:30,2013-11-04 15:30,2013-12-05 15:30,,2016-06-30 07:00,2016-08-03 17:00,,PT_Normal,,,,,cNox3gNYhkS/+FFf0OaapA,orPMRFBfCEC6y6NfnLwPEw,,,N,0,0,,,2013-11-08 12:56,2013-11-12 11:04,admin,admin
723,84963,1296,11212,1423,1,0,N,N,N,CP_Phys,TT_Task,DT_FixedDUR2,RV_OK,TK_NotStart,BEW/1460,Re-Submission of shopdrawings,,6012.5,0,63,0,0,0,63,0,0,0,,,,2016-08-11 07:00,2016-08-21 17:00,,2013-12-12 15:30,2013-12-23 15:30,2013-12-12 15:30,2013-12-23 15:30,2013-12-12 15:30,2013-12-23 15:30,,2016-08-11 07:00,2016-08-21 17:00,,PT_Normal,,,,,sskzQAHqHEGr46xjw0xM4w,+srZQxInR024EBgbrC9p8g,,,N,0,0,,,2013-11-08 12:56,2013-11-12 11:04,admin,admin
724,84964,1296,11212,1422,1,0,N,N,N,CP_Drtn,TT_Task,DT_FixedDUR2,RV_OK,TK_NotStart,BEW/1450,Review and reply by Engineer,,8749.5,0,63,0,0,0,63,0,0,0,,,,2016-08-04 07:00,2016-08-10 17:00,,2013-12-05 15:30,2013-12-12 15:30,2013-12-05 15:30,2013-12-12 15:30,2013-12-05 15:30,2013-12-12 15:30,,2016-08-04 07:00,2016-08-10 17:00,,PT_Normal,,,,,DDkfXeoIaUeaCQySipBH/Q,sI7holoeuEG4q9cExmSOpQ,,,N,0,0,,,2013-11-08 12:56,2013-11-12 11:04,admin,admin
725,84965,1296,11212,1422,1,0,N,N,N,CP_Drtn,TT_Task,DT_FixedDUR2,RV_OK,TK_NotStart,BEW/1470,Approval of Shop Drawings,,8749.5,8749.5,63,0,0,0,63,0,0,0,,,,2016-08-22 07:00,2016-08-28 17:00,,2013-12-23 15:30,2013-12-30 15:30,2013-12-23 15:30,2013-12-30 15:30,2013-12-23 15:30,2013-12-30 15:30,,2016-08-22 07:00,2016-08-28 17:00,,PT_Normal,,,,,z4DZC0TYIkWK0yCVDGmOkg,8zc9QSoP1UqTkoO5JMEdCw,,,N,0,0,,,2013-11-08 12:56,2013-11-12 11:04,admin,admin
726,84966,1296,11105,1423,1,0,N,N,N,CP_Phys,TT_Task,DT_FixedDUR2,RV_OK,TK_NotStart,BEW/1480,Preparation & Submission of shopdrawings,,5922.5,0,189,0,0,0,189,0,0,0,,,,2016-06-30 07:00,2016-08-03 17:00,,2013-11-20 15:30,2013-12-19 15:30,2013-11-20 15:30,2013-12-19 15:30,2013-11-20 15:30,2013-12-19 15:30,,2016-06-30 07:00,2016-08-03 17:00,,PT_Normal,,,,,B5wGFyLf2UOAOz6qevcK9g,orPMRFBfCEC6y6NfnLwPEw,,,N,0,0,,,2013-11-08 12:56,2013-11-12 11:04,admin,admin
727,84967,1296,11105,1423,1,0,N,N,N,CP_Phys,TT_Task,DT_FixedDUR2,RV_OK,TK_NotStart,BEW/1500,Re-Submission of shopdrawings,,5922.5,0,63,0,0,0,63,0,0,0,,,,2016-08-11 07:00,2016-08-21 17:00,,2013-12-26 15:30,2014-01-07 15:30,2013-12-26 15:30,2014-01-07 15:30,2013-12-26 15:30,2014-01-07 15:30,,2016-08-11 07:00,2016-08-21 17:00,,PT_Normal,,,,,EK0x0FlWt0ewI5tEATX/4A,+srZQxInR024EBgbrC9p8g,,,N,0,0,,,2013-11-08 12:56,2013-11-12 11:04,admin,admin
728,84968,1296,11105,1422,1,0,N,N,N,CP_Drtn,TT_Task,DT_FixedDUR2,RV_OK,TK_NotStart,BEW/1490,Review and reply by Engineer,,8623.5,0,63,0,0,0,63,0,0,0,,,,2016-08-04 07:00,2016-08-10 17:00,,2013-12-19 15:30,2013-12-26 15:30,2013-12-19 15:30,2013-12-26 15:30,2013-12-19 15:30,2013-12-26 15:30,,2016-08-04 07:00,2016-08-10 17:00,,PT_Normal,,,,,RT/MYNSoek+mQlhXl3BVRw,sI7holoeuEG4q9cExmSOpQ,,,N,0,0,,,2013-11-08 12:56,2013-11-12 11:04,admin,admin
729,84969,1296,11105,1422,1,0,N,N,N,CP_Drtn,TT_Task,DT_FixedDUR2,RV_OK,TK_NotStart,BEW/1510,Approval of Shop Drawings,,8614.5,8614.5,63,0,0,0,63,0,0,0,,,,2016-08-22 07:00,2016-08-28 17:00,,2014-01-07 15:30,2014-01-14 15:30,2014-01-07 15:30,2014-01-14 15:30,2014-01-07 15:30,2014-01-14 15:30,,2016-08-22 07:00,2016-08-28 17:00,,PT_Normal,,,,,kQppvDVVx0mBbrQFuyOvsw,8zc9QSoP1UqTkoO5JMEdCw,,,N,0,0,,,2013-11-08 12:56,2013-11-12 11:04,admin,admin
730,84970,1296,11107,1423,1,0,N,N,N,CP_Phys,TT_Task,DT_FixedDUR2,RV_OK,TK_NotStart,BEW/1520,Preparation & Submission of shopdrawings,,5832.5,0,189,0,0,0,189,0,0,0,,,,2016-06-30 07:00,2016-08-03 17:00,,2013-12-04 15:30,2014-01-05 15:30,2013-12-04 15:30,2014-01-05 15:30,2013-12-04 15:30,2014-01-05 15:30,,2016-06-30 07:00,2016-08-03 17:00,,PT_Normal,,,,,pHpx62KtokWN3CpqSD7OCQ,orPMRFBfCEC6y6NfnLwPEw,,,N,0,0,,,2013-11-08 12:56,2013-11-12 11:04,admin,admin
731,84971,1296,11107,1423,1,0,N,N,N,CP_Phys,TT_Task,DT_FixedDUR2,RV_OK,TK_NotStart,BEW/1540,Re-Submission of shopdrawings,,5832.5,0,63,0,0,0,63,0,0,0,,,,2016-08-11 07:00,2016-08-21 17:00,,2014-01-12 15:30,2014-01-22 15:30,2014-01-12 15:30,2014-01-22 15:30,2014-01-12 15:30,2014-01-22 15:30,,2016-08-11 07:00,2016-08-21 17:00,,PT_Normal,,,,,nMdq9Riz30m/7qSg9+5r4A,+srZQxInR024EBgbrC9p8g,,,N,0,0,,,2013-11-08 12:56,2013-11-12 11:04,admin,admin
732,84972,1296,11107,1422,1,0,N,N,N,CP_Drtn,TT_Task,DT_FixedDUR2,RV_OK,TK_NotStart,BEW/1530,Review and reply by Engineer,,8470.5,0,63,0,0,0,63,0,0,0,,,,2016-08-04 07:00,2016-08-10 17:00,,2014-01-05 15:30,2014-01-12 15:30,2014-01-05 15:30,2014-01-12 15:30,2014-01-05 15:30,2014-01-12 15:30,,2016-08-04 07:00,2016-08-10 17:00,,PT_Normal,,,,,1QVPw8NHCESNLqrKNVda9w,sI7holoeuEG4q9cExmSOpQ,,,N,0,0,,,2013-11-08 12:56,2013-11-12 11:04,admin,admin
733,84973,1296,11107,1422,1,0,N,N,N,CP_Drtn,TT_Task,DT_FixedDUR2,RV_OK,TK_NotStart,BEW/1550,Approval of Shop Drawings,,8479.5,8479.5,63,0,0,0,63,0,0,0,,,,2016-08-22 07:00,2016-08-28 17:00,,2014-01-22 15:30,2014-01-29 15:30,2014-01-22 15:30,2014-01-29 15:30,2014-01-22 15:30,2014-01-29 15:30,,2016-08-22 07:00,2016-08-28 17:00,,PT_Normal,,,,,L/jgE2ALr0qDn1RLPX+Dqg,8zc9QSoP1UqTkoO5JMEdCw,,,N,0,0,,,2013-11-08 12:56,2013-11-12 11:04,admin,admin
734,84974,1296,11177,1423,1,0,N,N,N,CP_Phys,TT_Task,DT_FixedDUR2,RV_OK,TK_NotStart,BEW/1560,Preparation & Submission of shopdrawings,,5832.5,0,189,0,0,0,189,0,0,0,,,,2016-06-30 07:00,2016-08-03 17:00,,2013-12-04 15:30,2014-01-05 15:30,2013-12-04 15:30,2014-01-05 15:30,2013-12-04 15:30,2014-01-05 15:30,,2016-06-30 07:00,2016-08-03 17:00,,PT_Normal,,,,,SJGXTbrY4k+g4lWxjLpKAg,orPMRFBfCEC6y6NfnLwPEw,,,N,0,0,,,2013-11-08 12:56,2013-11-11 23:03,admin,admin
735,84975,1296,11177,1423,1,0,N,N,N,CP_Phys,TT_Task,DT_FixedDUR2,RV_OK,TK_NotStart,BEW/1580,Re-Submission of shopdrawings,,5832.5,0,63,0,0,0,63,0,0,0,,,,2016-08-11 07:00,2016-08-21 17:00,,2014-01-12 15:30,2014-01-22 15:30,2014-01-12 15:30,2014-01-22 15:30,2014-01-12 15:30,2014-01-22 15:30,,2016-08-11 07:00,2016-08-21 17:00,,PT_Normal,,,,,DMRpCFL6UUiXhvEXxd5tZw,+srZQxInR024EBgbrC9p8g,,,N,0,0,,,2013-11-08 12:56,2013-11-11 23:04,admin,admin
736,84976,1296,11177,1422,1,0,N,N,N,CP_Drtn,TT_Task,DT_FixedDUR2,RV_OK,TK_NotStart,BEW/1570,Review and reply by Engineer,,8470.5,0,63,0,0,0,63,0,0,0,,,,2016-08-04 07:00,2016-08-10 17:00,,2014-01-05 15:30,2014-01-12 15:30,2014-01-05 15:30,2014-01-12 15:30,2014-01-05 15:30,2014-01-12 15:30,,2016-08-04 07:00,2016-08-10 17:00,,PT_Normal,,,,,gdFpNj86gkKjCQk1fy2OfA,sI7holoeuEG4q9cExmSOpQ,,,N,0,0,,,2013-11-08 12:56,2013-11-11 18:49,admin,admin
737,84977,1296,11177,1422,1,0,N,N,N,CP_Drtn,TT_Task,DT_FixedDUR2,RV_OK,TK_NotStart,BEW/1590,Approval of Shop Drawings,,8479.5,8479.5,63,0,0,0,63,0,0,0,,,,2016-08-22 07:00,2016-08-28 17:00,,2014-01-22 15:30,2014-01-29 15:30,2014-01-22 15:30,2014-01-29 15:30,2014-01-22 15:30,2014-01-29 15:30,,2016-08-22 07:00,2016-08-28 17:00,,PT_Normal,,,,,MrVc8GA9OkCvmkxJik2Ahw,8zc9QSoP1UqTkoO5JMEdCw,,,N,0,0,,,2013-11-08 12:56,2013-11-11 18:49,admin,admin
738,84978,1296,11224,1423,1,0,N,N,N,CP_Phys,TT_Task,DT_FixedDUR2,RV_OK,TK_NotStart,BEW/1600,Preparation & Submission of Cross Sections,,5391.5,0,225,0,0,0,225,0,0,0,,,,2016-06-05 07:00,2016-07-13 17:00,,2014-01-19 15:30,2014-02-23 15:30,2014-01-19 15:30,2014-02-23 15:30,2014-01-19 15:30,2014-02-23 15:30,,2016-06-05 07:00,2016-07-13 17:00,,PT_Normal,,,,,H8coTFYkG0uh4HrkwR2UtQ,Fm0jUWZoYEy3Ld3uNRtO6A,,,N,0,0,,,2013-11-08 12:59,2013-11-11 23:03,admin,admin
739,84979,1296,11224,1422,1,0,N,N,N,CP_Drtn,TT_Task,DT_FixedDUR2,RV_OK,TK_NotStart,BEW/1610,Review and reply by Engineer,,7840.5,0,189,0,0,0,189,0,0,0,,,,2016-07-14 07:00,2016-08-03 17:00,,2014-02-23 15:30,2014-03-16 15:30,2014-02-23 15:30,2014-03-16 15:30,2014-02-23 15:30,2014-03-16 15:30,,2016-07-14 07:00,2016-08-03 17:00,,PT_Normal,,,,,wdIzOeeJP0+mxjq6n9NI9Q,+gutfrbXF0CzAdHPgorXvw,,,N,0,0,,,2013-11-08 12:59,2013-11-11 14:28,admin,admin
740,84980,1296,11224,1423,1,0,N,N,N,CP_Phys,TT_Task,DT_FixedDUR2,RV_OK,TK_NotStart,BEW/1620,Re- Submission of Cross Sections,,5391.5,0,63,0,0,0,63,0,0,0,,,,2016-08-04 07:00,2016-08-14 17:00,,2014-03-16 15:30,2014-03-25 15:30,2014-03-16 15:30,2014-03-25 15:30,2014-03-16 15:30,2014-03-25 15:30,,2016-08-04 07:00,2016-08-14 17:00,,PT_Normal,,,,,cedUKswjO0KD7tDGQpDidA,g9qP6d5SBUmsmit60LUImw,,,N,0,0,,,2013-11-08 12:59,2013-11-11 23:04,admin,admin
741,84981,1296,11224,1422,1,0,N,N,N,CP_Drtn,TT_Task,DT_FixedDUR2,RV_OK,TK_NotStart,BEW/1630,Approval of Cross sections,,7858.5,7858.5,126,0,0,0,126,0,0,0,,,,2016-08-15 07:00,2016-08-28 17:00,,2014-03-25 15:30,2014-04-08 15:30,2014-03-25 15:30,2014-04-08 15:30,2014-03-25 15:30,2014-04-08 15:30,,2016-08-15 07:00,2016-08-28 17:00,,PT_Normal,,,,,kTu3oFQw8kK4FUDJG0/2KA,1fGLn2MjfE+ps1QSm+gTdQ,,,N,0,0,,,2013-11-08 12:59,2013-11-11 14:28,admin,admin
742,84982,1296,11215,1423,1,0,N,N,N,CP_Phys,TT_Task,DT_FixedDUR2,RV_OK,TK_NotStart,BEW/1640,Preparation & Submission of Cross Sections,,5661.5,0,225,0,0,0,225,0,0,0,,,,2016-06-05 07:00,2016-07-13 17:00,,2013-12-04 15:30,2014-01-09 15:30,2013-12-04 15:30,2014-01-09 15:30,2013-12-04 15:30,2014-01-09 15:30,,2016-06-05 07:00,2016-07-13 17:00,,PT_Normal,,,,,tVYKuKih4kK2EmVDrh+jmg,Fm0jUWZoYEy3Ld3uNRtO6A,,,N,0,0,,,2013-11-08 12:59,2013-11-12 11:41,admin,admin
743,84983,1296,11215,1422,1,0,N,N,N,CP_Drtn,TT_Task,DT_FixedDUR2,RV_OK,TK_NotStart,BEW/1650,Review and reply by Engineer,,8245.5,0,189,0,0,0,189,0,0,0,,,,2016-07-14 07:00,2016-08-03 17:00,,2014-01-09 15:30,2014-01-30 15:30,2014-01-09 15:30,2014-01-30 15:30,2014-01-09 15:30,2014-01-30 15:30,,2016-07-14 07:00,2016-08-03 17:00,,PT_Normal,,,,,Jrn+hmuS9USdWISghSUPsQ,+gutfrbXF0CzAdHPgorXvw,,,N,0,0,,,2013-11-08 12:59,2013-11-12 11:41,admin,admin
744,84984,1296,11215,1423,1,0,N,N,N,CP_Phys,TT_Task,DT_FixedDUR2,RV_OK,TK_NotStart,BEW/1660,Re- Submission of Cross Sections,,5670.5,0,63,0,0,0,63,0,0,0,,,,2016-08-04 07:00,2016-08-14 17:00,,2014-01-30 15:30,2014-02-10 15:30,2014-01-30 15:30,2014-02-10 15:30,2014-01-30 15:30,2014-02-10 15:30,,2016-08-04 07:00,2016-08-14 17:00,,PT_Normal,,,,,HJNhFaPfqUWYAbHOARGzjw,g9qP6d5SBUmsmit60LUImw,,,N,0,0,,,2013-11-08 12:59,2013-11-12 11:41,admin,admin
745,84985,1296,11215,1422,1,0,N,N,N,CP_Drtn,TT_Task,DT_FixedDUR2,RV_OK,TK_NotStart,BEW/1670,Approval of Cross sections,,8245.5,8245.5,126,0,0,0,126,0,0,0,,,,2016-08-15 07:00,2016-08-28 17:00,,2014-02-10 15:30,2014-02-24 15:30,2014-02-10 15:30,2014-02-24 15:30,2014-02-10 15:30,2014-02-24 15:30,,2016-08-15 07:00,2016-08-28 17:00,,PT_Normal,,,,,B6y76o0n0Ee59ziDJp1sKw,1fGLn2MjfE+ps1QSm+gTdQ,,,N,0,0,,,2013-11-08 12:59,2013-11-12 11:41,admin,admin
746,84986,1296,11207,1423,1,0,N,N,N,CP_Phys,TT_Task,DT_FixedDUR2,RV_OK,TK_NotStart,BEW/1680,Preparation & Submission of Cross Sections,,5634.5,0,225,0,0,0,225,0,0,0,,,,2016-06-28 07:00,2016-08-07 17:00,,2014-01-02 15:30,2014-02-09 15:30,2014-01-02 15:30,2014-02-09 15:30,2014-01-02 15:30,2014-02-09 15:30,,2016-06-28 07:00,2016-08-07 17:00,,PT_Normal,,,,,nlgGAbmGC0mLwgHCbxT1iw,RptapVkaq0WGVEW7tPU0Rg,,,N,0,0,,,2013-11-08 12:59,2013-11-12 11:12,admin,admin
747,84987,1296,11207,1422,1,0,N,N,N,CP_Drtn,TT_Task,DT_FixedDUR2,RV_OK,TK_NotStart,BEW/1690,Approval of Cross sections,,8191.5,8191.5,189,0,0,0,189,0,0,0,,,,2016-08-08 07:00,2016-08-28 17:00,,2014-02-09 15:30,2014-03-02 15:30,2014-02-09 15:30,2014-03-02 15:30,2014-02-09 15:30,2014-03-02 15:30,,2016-08-08 07:00,2016-08-28 17:00,,PT_Normal,,,,,Mh1Iyq6sfk+os8m8puH3ig,D29QCag+60aATsqgppT7sQ,,,N,0,0,,,2013-11-08 12:59,2013-11-12 11:12,admin,admin
748,84988,1296,11214,1423,1,0,N,N,N,CP_Phys,TT_Task,DT_FixedDUR2,RV_OK,TK_NotStart,BEW/1700,Preparation & Submission of Cross Sections,,5634.5,0,225,0,0,0,225,0,0,0,,,,2016-06-28 07:00,2016-08-07 17:00,,2014-01-02 15:30,2014-02-09 15:30,2014-01-02 15:30,2014-02-09 15:30,2014-01-02 15:30,2014-02-09 15:30,,2016-06-28 07:00,2016-08-07 17:00,,PT_Normal,,,,,EfuxtOjYkEyCbkF+eiygug,RptapVkaq0WGVEW7tPU0Rg,,,N,0,0,,,2013-11-08 12:59,2013-11-12 11:10,admin,admin
749,84989,1296,11214,1422,1,0,N,N,N,CP_Drtn,TT_Task,DT_FixedDUR2,RV_OK,TK_NotStart,BEW/1710,Approval of Cross sections,,8191.5,8191.5,189,0,0,0,189,0,0,0,,,,2016-08-08 07:00,2016-08-28 17:00,,2014-02-09 15:30,2014-03-02 15:30,2014-02-09 15:30,2014-03-02 15:30,2014-02-09 15:30,2014-03-02 15:30,,2016-08-08 07:00,2016-08-28 17:00,,PT_Normal,,,,,tx1QnO0LfUuXsjBE2x0ZrQ,D29QCag+60aATsqgppT7sQ,,,N,0,0,,,2013-11-08 12:59,2013-11-12 11:10,admin,admin
750,84990,1296,11233,1423,1,0,N,N,N,CP_Phys,TT_Task,DT_FixedDUR2,RV_OK,TK_NotStart,BEW/1720,Preparation & Submission of Cross Sections,,5886.5,0,63,0,0,0,63,0,0,0,,,,2016-07-28 07:00,2016-08-07 17:00,,2013-12-18 15:30,2013-12-29 15:30,2013-12-18 15:30,2013-12-29 15:30,2013-12-18 15:30,2013-12-29 15:30,,2016-07-28 07:00,2016-08-07 17:00,,PT_Normal,,,,,8yXZ1k1q6Uqdi4e11sO7tg,RptapVkaq0WGVEW7tPU0Rg,,,N,0,0,,,2013-11-08 13:00,2013-11-11 23:03,admin,admin
751,84991,1296,11233,1422,1,0,N,N,N,CP_Drtn,TT_Task,DT_FixedDUR2,RV_OK,TK_NotStart,BEW/1730,Approval of Cross sections,,8569.5,8569.5,189,0,0,0,189,0,0,0,,,,2016-08-08 07:00,2016-08-28 17:00,,2013-12-29 15:30,2014-01-19 15:30,2013-12-29 15:30,2014-01-19 15:30,2013-12-29 15:30,2014-01-19 15:30,,2016-08-08 07:00,2016-08-28 17:00,,PT_Normal,,,,,jOcUTrYBi02VdFNBgiZQxQ,D29QCag+60aATsqgppT7sQ,,,N,0,0,,,2013-11-08 13:00,2013-11-11 14:24,admin,admin
752,84992,1296,11208,1423,1,0,N,N,N,CP_Phys,TT_Task,DT_FixedDUR2,RV_OK,TK_NotStart,BEW/1740,Preparation & Submission of Cross Sections,,5724.5,0,225,0,0,0,225,0,0,0,,,,2016-06-28 07:00,2016-08-07 17:00,,2013-12-18 15:30,2014-01-26 15:30,2013-12-18 15:30,2014-01-26 15:30,2013-12-18 15:30,2014-01-26 15:30,,2016-06-28 07:00,2016-08-07 17:00,,PT_Normal,,,,,445HoehP4k2Dtp6FnsMl8w,RptapVkaq0WGVEW7tPU0Rg,,,N,0,0,,,2013-11-08 13:00,2013-11-12 11:41,admin,admin
753,84993,1296,11208,1422,1,0,N,N,N,CP_Drtn,TT_Task,DT_FixedDUR2,RV_OK,TK_NotStart,BEW/1750,Approval of Cross sections,,8317.5,8317.5,189,0,0,0,189,0,0,0,,,,2016-08-08 07:00,2016-08-28 17:00,,2014-01-26 15:30,2014-02-16 15:30,2014-01-26 15:30,2014-02-16 15:30,2014-01-26 15:30,2014-02-16 15:30,,2016-08-08 07:00,2016-08-28 17:00,,PT_Normal,,,,,QmYyaQxcgUmsZus8p9RM6Q,D29QCag+60aATsqgppT7sQ,,,N,0,0,,,2013-11-08 13:00,2013-11-12 11:41,admin,admin
754,84994,1296,11155,1423,1,0,N,N,N,CP_Phys,TT_Task,DT_FixedDUR2,RV_OK,TK_NotStart,BEW/1760,Preparation & Submission of Cross Sections,,5634.5,0,225,0,0,0,225,0,0,0,,,,2016-06-28 07:00,2016-08-07 17:00,,2014-01-02 15:30,2014-02-09 15:30,2014-01-02 15:30,2014-02-09 15:30,2014-01-02 15:30,2014-02-09 15:30,,2016-06-28 07:00,2016-08-07 17:00,,PT_Normal,,,,,+hwcSoMk1UWRff4C3ZhQnA,RptapVkaq0WGVEW7tPU0Rg,,,N,0,0,,,2013-11-08 13:00,2013-11-12 11:10,admin,admin
755,84995,1296,11155,1422,1,0,N,N,N,CP_Drtn,TT_Task,DT_FixedDUR2,RV_OK,TK_NotStart,BEW/1770,Approval of Cross sections,,8191.5,8191.5,189,0,0,0,189,0,0,0,,,,2016-08-08 07:00,2016-08-28 17:00,,2014-02-09 15:30,2014-03-02 15:30,2014-02-09 15:30,2014-03-02 15:30,2014-02-09 15:30,2014-03-02 15:30,,2016-08-08 07:00,2016-08-28 17:00,,PT_Normal,,,,,9Rej2KrIrEiurN9uWkk7jQ,D29QCag+60aATsqgppT7sQ,,,N,0,0,,,2013-11-08 13:00,2013-11-12 11:10,admin,admin
756,84996,1296,11232,1423,1,0,N,N,N,CP_Phys,TT_Task,DT_FixedDUR2,RV_OK,TK_NotStart,BEW/1780,Preparation & Submission of Cross Sections,,5544.5,0,225,0,0,0,225,0,0,0,,,,2016-06-28 07:00,2016-08-07 17:00,,2014-01-19 15:30,2014-02-23 15:30,2014-01-19 15:30,2014-02-23 15:30,2014-01-19 15:30,2014-02-23 15:30,,2016-06-28 07:00,2016-08-07 17:00,,PT_Normal,,,,,W3ni4u0+VUGytSVoDNuEdg,RptapVkaq0WGVEW7tPU0Rg,,,N,0,0,,,2013-11-08 13:00,2013-11-12 11:10,admin,admin
757,84997,1296,11232,1422,1,0,N,N,N,CP_Drtn,TT_Task,DT_FixedDUR2,RV_OK,TK_NotStart,BEW/1790,Approval of Cross sections,,8065.5,8065.5,189,0,0,0,189,0,0,0,,,,2016-08-08 07:00,2016-08-28 17:00,,2014-02-23 15:30,2014-03-16 15:30,2014-02-23 15:30,2014-03-16 15:30,2014-02-23 15:30,2014-03-16 15:30,,2016-08-08 07:00,2016-08-28 17:00,,PT_Normal,,,,,hZdxd+x9L02aZVpqSRG7xQ,D29QCag+60aATsqgppT7sQ,,,N,0,0,,,2013-11-08 13:00,2013-11-12 11:10,admin,admin
758,84998,1296,11225,1423,1,0,N,N,N,CP_Phys,TT_Task,DT_FixedDUR2,RV_OK,TK_NotStart,BEW/1800,Preparation & Submission of shopdrawings,,5796.5,0,189,0,0,0,189,0,0,0,,,,2016-06-30 07:00,2016-08-03 17:00,,2013-12-10 15:30,2014-01-09 15:30,2013-12-10 15:30,2014-01-09 15:30,2013-12-10 15:30,2014-01-09 15:30,,2016-06-30 07:00,2016-08-03 17:00,,PT_Normal,,,,,/knjYkLXUEe+wiqI6mJMXQ,+rSy1D5hzEyrJwKgzziW/Q,,,N,0,0,,,2013-11-08 13:00,2013-11-12 11:12,admin,admin
759,84999,1296,11225,1423,1,0,N,N,N,CP_Phys,TT_Task,DT_FixedDUR2,RV_OK,TK_NotStart,BEW/1820,Re-Submission of shopdrawings,,5805.5,0,63,0,0,0,63,0,0,0,,,,2016-08-11 07:00,2016-08-21 17:00,,2014-01-16 15:30,2014-01-27 15:30,2014-01-16 15:30,2014-01-27 15:30,2014-01-16 15:30,2014-01-27 15:30,,2016-08-11 07:00,2016-08-21 17:00,,PT_Normal,,,,,bNmijgOu0Eq39BZPz7loSg,xmqaFoOW60KZnDcB7UsYdw,,,N,0,0,,,2013-11-08 13:00,2013-11-12 11:12,admin,admin
760,85000,1296,11225,1422,1,0,N,N,N,CP_Drtn,TT_Task,DT_FixedDUR2,RV_OK,TK_NotStart,BEW/1810,Review and reply by Engineer,,8434.5,0,63,0,0,0,63,0,0,0,,,,2016-08-04 07:00,2016-08-10 17:00,,2014-01-09 15:30,2014-01-16 15:30,2014-01-09 15:30,2014-01-16 15:30,2014-01-09 15:30,2014-01-16 15:30,,2016-08-04 07:00,2016-08-10 17:00,,PT_Normal,,,,,jw0buwnZ/k+87CZn9VhwNA,cQ0JW/mK2UC+lr0JsOMDFA,,,N,0,0,,,2013-11-08 13:00,2013-11-12 11:12,admin,admin
761,85001,1296,11225,1422,1,0,N,N,N,CP_Drtn,TT_Task,DT_FixedDUR2,RV_OK,TK_NotStart,BEW/1830,Approval of Shop Drawings,,8434.5,8434.5,63,0,0,0,63,0,0,0,,,,2016-08-22 07:00,2016-08-28 17:00,,2014-01-27 15:30,2014-02-03 15:30,2014-01-27 15:30,2014-02-03 15:30,2014-01-27 15:30,2014-02-03 15:30,,2016-08-22 07:00,2016-08-28 17:00,,PT_Normal,,,,,CzZ0Y07Z7U27yn4FMd9kVg,RVz+c/cNQEG67jDV9P7alA,,,N,0,0,,,2013-11-08 13:00,2013-11-12 11:12,admin,admin
762,85002,1296,11186,1423,1,0,N,N,N,CP_Phys,TT_Task,DT_FixedDUR2,RV_OK,TK_NotStart,BEW/1840,Preparation & Submission of shopdrawings,,5562.5,0,189,0,0,0,189,0,0,0,,,,2016-06-30 07:00,2016-08-03 17:00,,2014-01-19 15:30,2014-02-17 15:30,2014-01-19 15:30,2014-02-17 15:30,2014-01-19 15:30,2014-02-17 15:30,,2016-06-30 07:00,2016-08-03 17:00,,PT_Normal,,,,,oISec4or3E6JFwCgvBJ6CQ,+rSy1D5hzEyrJwKgzziW/Q,,,N,0,0,,,2013-11-08 13:00,2013-11-12 11:10,admin,admin
763,85003,1296,11186,1423,1,0,N,N,N,CP_Phys,TT_Task,DT_FixedDUR2,RV_OK,TK_NotStart,BEW/1860,Re-Submission of shopdrawings,,5562.5,0,63,0,0,0,63,0,0,0,,,,2016-08-11 07:00,2016-08-21 17:00,,2014-02-24 15:30,2014-03-05 15:30,2014-02-24 15:30,2014-03-05 15:30,2014-02-24 15:30,2014-03-05 15:30,,2016-08-11 07:00,2016-08-21 17:00,,PT_Normal,,,,,oI+hFHCZlESh/DVezMn2EQ,xmqaFoOW60KZnDcB7UsYdw,,,N,0,0,,,2013-11-08 13:00,2013-11-12 11:10,admin,admin
764,85004,1296,11186,1422,1,0,N,N,N,CP_Drtn,TT_Task,DT_FixedDUR2,RV_OK,TK_NotStart,BEW/1850,Review and reply by Engineer,,8083.5,0,63,0,0,0,63,0,0,0,,,,2016-08-04 07:00,2016-08-10 17:00,,2014-02-17 15:30,2014-02-24 15:30,2014-02-17 15:30,2014-02-24 15:30,2014-02-17 15:30,2014-02-24 15:30,,2016-08-04 07:00,2016-08-10 17:00,,PT_Normal,,,,,QzDZonv8o0CYq0gT7qLsRg,cQ0JW/mK2UC+lr0JsOMDFA,,,N,0,0,,,2013-11-08 13:00,2013-11-12 11:10,admin,admin
765,85005,1296,11186,1422,1,0,N,N,N,CP_Drtn,TT_Task,DT_FixedDUR2,RV_OK,TK_NotStart,BEW/1870,Approval of Shop Drawings,,8101.5,8101.5,63,0,0,0,63,0,0,0,,,,2016-08-22 07:00,2016-08-28 17:00,,2014-03-05 15:30,2014-03-12 15:30,2014-03-05 15:30,2014-03-12 15:30,2014-03-05 15:30,2014-03-12 15:30,,2016-08-22 07:00,2016-08-28 17:00,,PT_Normal,,,,,3ySlt89WDU6skRf+y2ylqQ,RVz+c/cNQEG67jDV9P7alA,,,N,0,0,,,2013-11-08 13:00,2013-11-12 11:10,admin,admin
766,85006,1296,11229,1423,1,0,N,N,N,CP_Phys,TT_Task,DT_FixedDUR2,RV_OK,TK_NotStart,BEW/1880,Preparation & Submission of shopdrawings,,5652.5,0,189,0,0,0,189,0,0,0,,,,2016-06-30 07:00,2016-08-03 17:00,,2014-01-02 15:30,2014-02-03 15:30,2014-01-02 15:30,2014-02-03 15:30,2014-01-02 15:30,2014-02-03 15:30,,2016-06-30 07:00,2016-08-03 17:00,,PT_Normal,,,,,VD3Cd0NnzUCYqTAEL9P/nw,+rSy1D5hzEyrJwKgzziW/Q,,,N,0,0,,,2013-11-08 13:00,2013-11-12 11:41,admin,admin
767,85007,1296,11229,1423,1,0,N,N,N,CP_Phys,TT_Task,DT_FixedDUR2,RV_OK,TK_NotStart,BEW/1900,Re-Submission of shopdrawings,,5652.5,0,63,0,0,0,63,0,0,0,,,,2016-08-11 07:00,2016-08-21 17:00,,2014-02-10 15:30,2014-02-19 15:30,2014-02-10 15:30,2014-02-19 15:30,2014-02-10 15:30,2014-02-19 15:30,,2016-08-11 07:00,2016-08-21 17:00,,PT_Normal,,,,,uUvDavkdNk+ym8ll6W+sVw,xmqaFoOW60KZnDcB7UsYdw,,,N,0,0,,,2013-11-08 13:00,2013-11-12 11:41,admin,admin
768,85008,1296,11229,1422,1,0,N,N,N,CP_Drtn,TT_Task,DT_FixedDUR2,RV_OK,TK_NotStart,BEW/1890,Review and reply by Engineer,,8209.5,0,63,0,0,0,63,0,0,0,,,,2016-08-04 07:00,2016-08-10 17:00,,2014-02-03 15:30,2014-02-10 15:30,2014-02-03 15:30,2014-02-10 15:30,2014-02-03 15:30,2014-02-10 15:30,,2016-08-04 07:00,2016-08-10 17:00,,PT_Normal,,,,,D4xDv3lKTU+MY5N5esCEXQ,cQ0JW/mK2UC+lr0JsOMDFA,,,N,0,0,,,2013-11-08 13:00,2013-11-12 11:41,admin,admin
769,85009,1296,11229,1422,1,0,N,N,N,CP_Drtn,TT_Task,DT_FixedDUR2,RV_OK,TK_NotStart,BEW/1910,Approval of Shop Drawings,,8227.5,8227.5,63,0,0,0,63,0,0,0,,,,2016-08-22 07:00,2016-08-28 17:00,,2014-02-19 15:30,2014-02-26 15:30,2014-02-19 15:30,2014-02-26 15:30,2014-02-19 15:30,2014-02-26 15:30,,2016-08-22 07:00,2016-08-28 17:00,,PT_Normal,,,,,O1eNovEQPUuEvuTbA+eAdQ,RVz+c/cNQEG67jDV9P7alA,,,N,0,0,,,2013-11-08 13:00,2013-11-12 11:41,admin,admin
770,85010,1296,11239,1423,1,0,N,N,N,CP_Phys,TT_Task,DT_FixedDUR2,RV_OK,TK_NotStart,BEW/1920,Preparation & Submission of shopdrawings,,5742.5,0,189,0,0,0,189,0,0,0,,,,2016-06-30 07:00,2016-08-03 17:00,,2013-12-18 15:30,2014-01-20 15:30,2013-12-18 15:30,2014-01-20 15:30,2013-12-18 15:30,2014-01-20 15:30,,2016-06-30 07:00,2016-08-03 17:00,,PT_Normal,,,,,cF/kLPoapE6uqjwfGQ+oMQ,+rSy1D5hzEyrJwKgzziW/Q,,,N,0,0,,,2013-11-08 13:00,2013-11-12 11:10,admin,admin
771,85011,1296,11239,1423,1,0,N,N,N,CP_Phys,TT_Task,DT_FixedDUR2,RV_OK,TK_NotStart,BEW/1940,Re-Submission of shopdrawings,,5742.5,0,63,0,0,0,63,0,0,0,,,,2016-08-11 07:00,2016-08-21 17:00,,2014-01-27 15:30,2014-02-05 15:30,2014-01-27 15:30,2014-02-05 15:30,2014-01-27 15:30,2014-02-05 15:30,,2016-08-11 07:00,2016-08-21 17:00,,PT_Normal,,,,,MUZMKPZhVEWUsfx3Ma4yDQ,xmqaFoOW60KZnDcB7UsYdw,,,N,0,0,,,2013-11-08 13:00,2013-11-12 11:10,admin,admin
772,85012,1296,11239,1422,1,0,N,N,N,CP_Drtn,TT_Task,DT_FixedDUR2,RV_OK,TK_NotStart,BEW/1930,Review and reply by Engineer,,8335.5,0,63,0,0,0,63,0,0,0,,,,2016-08-04 07:00,2016-08-10 17:00,,2014-01-20 15:30,2014-01-27 15:30,2014-01-20 15:30,2014-01-27 15:30,2014-01-20 15:30,2014-01-27 15:30,,2016-08-04 07:00,2016-08-10 17:00,,PT_Normal,,,,,NBJvybwLgkm2xofVjZw6Nw,cQ0JW/mK2UC+lr0JsOMDFA,,,N,0,0,,,2013-11-08 13:00,2013-11-12 11:10,admin,admin
773,85013,1296,11239,1422,1,0,N,N,N,CP_Drtn,TT_Task,DT_FixedDUR2,RV_OK,TK_NotStart,BEW/1950,Approval of Shop Drawings,,8353.5,8353.5,63,0,0,0,63,0,0,0,,,,2016-08-22 07:00,2016-08-28 17:00,,2014-02-05 15:30,2014-02-12 15:30,2014-02-05 15:30,2014-02-12 15:30,2014-02-05 15:30,2014-02-12 15:30,,2016-08-22 07:00,2016-08-28 17:00,,PT_Normal,,,,,l4zY+2Xuk0Ci5SF8zllTIg,RVz+c/cNQEG67jDV9P7alA,,,N,0,0,,,2013-11-08 13:00,2013-11-12 11:10,admin,admin
774,85014,1296,11228,1423,1,0,N,N,N,CP_Phys,TT_Task,DT_FixedDUR2,RV_OK,TK_NotStart,BEW/1960,Preparation & Submission of shopdrawings,,5742.5,0,189,0,0,0,189,0,0,0,,,,2016-06-30 07:00,2016-08-03 17:00,,2013-12-18 15:30,2014-01-20 15:30,2013-12-18 15:30,2014-01-20 15:30,2013-12-18 15:30,2014-01-20 15:30,,2016-06-30 07:00,2016-08-03 17:00,,PT_Normal,,,,,H/T1Yn0zH0CyRr479c1WEw,+rSy1D5hzEyrJwKgzziW/Q,,,N,0,0,,,2013-11-08 13:00,2013-11-12 11:41,admin,admin
775,85015,1296,11228,1423,1,0,N,N,N,CP_Phys,TT_Task,DT_FixedDUR2,RV_OK,TK_NotStart,BEW/1980,Re-Submission of shopdrawings,,5742.5,0,63,0,0,0,63,0,0,0,,,,2016-08-11 07:00,2016-08-21 17:00,,2014-01-27 15:30,2014-02-05 15:30,2014-01-27 15:30,2014-02-05 15:30,2014-01-27 15:30,2014-02-05 15:30,,2016-08-11 07:00,2016-08-21 17:00,,PT_Normal,,,,,3Br9nOKdc0ShgfRgSpkpNw,xmqaFoOW60KZnDcB7UsYdw,,,N,0,0,,,2013-11-08 13:00,2013-11-12 11:41,admin,admin
776,85016,1296,11228,1422,1,0,N,N,N,CP_Drtn,TT_Task,DT_FixedDUR2,RV_OK,TK_NotStart,BEW/1970,Review and reply by Engineer,,8335.5,0,63,0,0,0,63,0,0,0,,,,2016-08-04 07:00,2016-08-10 17:00,,2014-01-20 15:30,2014-01-27 15:30,2014-01-20 15:30,2014-01-27 15:30,2014-01-20 15:30,2014-01-27 15:30,,2016-08-04 07:00,2016-08-10 17:00,,PT_Normal,,,,,c93VcxMc50qVIyldUJJNEw,cQ0JW/mK2UC+lr0JsOMDFA,,,N,0,0,,,2013-11-08 13:00,2013-11-12 11:41,admin,admin
777,85017,1296,11228,1422,1,0,N,N,N,CP_Drtn,TT_Task,DT_FixedDUR2,RV_OK,TK_NotStart,BEW/1990,Approval of Shop Drawings,,8353.5,8353.5,63,0,0,0,63,0,0,0,,,,2016-08-22 07:00,2016-08-28 17:00,,2014-02-05 15:30,2014-02-12 15:30,2014-02-05 15:30,2014-02-12 15:30,2014-02-05 15:30,2014-02-12 15:30,,2016-08-22 07:00,2016-08-28 17:00,,PT_Normal,,,,,sPJYA+Zm1EGjKXfBRTJdwA,RVz+c/cNQEG67jDV9P7alA,,,N,0,0,,,2013-11-08 13:00,2013-11-12 11:41,admin,admin
778,85018,1296,11211,1423,1,0,N,N,N,CP_Phys,TT_Task,DT_FixedDUR2,RV_OK,TK_NotStart,BEW/2000,Preparation & Submission of shopdrawings,,5742.5,0,189,0,0,0,189,0,0,0,,,,2016-06-30 07:00,2016-08-03 17:00,,2013-12-18 15:30,2014-01-20 15:30,2013-12-18 15:30,2014-01-20 15:30,2013-12-18 15:30,2014-01-20 15:30,,2016-06-30 07:00,2016-08-03 17:00,,PT_Normal,,,,,h9kgS+9QRk+iVtiUbMIYWA,+rSy1D5hzEyrJwKgzziW/Q,,,N,0,0,,,2013-11-08 13:00,2013-11-12 11:10,admin,admin
779,85019,1296,11211,1423,1,0,N,N,N,CP_Phys,TT_Task,DT_FixedDUR2,RV_OK,TK_NotStart,BEW/2020,Re-Submission of shopdrawings,,5742.5,0,63,0,0,0,63,0,0,0,,,,2016-08-11 07:00,2016-08-21 17:00,,2014-01-27 15:30,2014-02-05 15:30,2014-01-27 15:30,2014-02-05 15:30,2014-01-27 15:30,2014-02-05 15:30,,2016-08-11 07:00,2016-08-21 17:00,,PT_Normal,,,,,T/RaxXLKPUSoxFW7wt0k/w,xmqaFoOW60KZnDcB7UsYdw,,,N,0,0,,,2013-11-08 13:00,2013-11-12 11:10,admin,admin
780,85020,1296,11211,1422,1,0,N,N,N,CP_Drtn,TT_Task,DT_FixedDUR2,RV_OK,TK_NotStart,BEW/2010,Review and reply by Engineer,,8335.5,0,63,0,0,0,63,0,0,0,,,,2016-08-04 07:00,2016-08-10 17:00,,2014-01-20 15:30,2014-01-27 15:30,2014-01-20 15:30,2014-01-27 15:30,2014-01-20 15:30,2014-01-27 15:30,,2016-08-04 07:00,2016-08-10 17:00,,PT_Normal,,,,,zycaFOpJQEGLPPLDEMXHzw,cQ0JW/mK2UC+lr0JsOMDFA,,,N,0,0,,,2013-11-08 13:00,2013-11-12 11:10,admin,admin
781,85021,1296,11211,1422,1,0,N,N,N,CP_Drtn,TT_Task,DT_FixedDUR2,RV_OK,TK_NotStart,BEW/2030,Approval of Shop Drawings,,8353.5,8353.5,63,0,0,0,63,0,0,0,,,,2016-08-22 07:00,2016-08-28 17:00,,2014-02-05 15:30,2014-02-12 15:30,2014-02-05 15:30,2014-02-12 15:30,2014-02-05 15:30,2014-02-12 15:30,,2016-08-22 07:00,2016-08-28 17:00,,PT_Normal,,,,,wO2qUYRXDk+zgYFcgZwEyw,RVz+c/cNQEG67jDV9P7alA,,,N,0,0,,,2013-11-08 13:00,2013-11-12 11:10,admin,admin
782,85022,1296,11195,1423,1,0,N,N,N,CP_Phys,TT_Task,DT_FixedDUR2,RV_OK,TK_NotStart,BEW/2040,Preparation & Submission of shopdrawings,,5742.5,0,189,0,0,0,189,0,0,0,,,,2016-06-30 07:00,2016-08-03 17:00,,2013-12-18 15:30,2014-01-20 15:30,2013-12-18 15:30,2014-01-20 15:30,2013-12-18 15:30,2014-01-20 15:30,,2016-06-30 07:00,2016-08-03 17:00,,PT_Normal,,,,,XcJWRXo4X0yORYAHLXrgkw,+rSy1D5hzEyrJwKgzziW/Q,,,N,0,0,,,2013-11-08 13:00,2013-11-12 11:41,admin,admin
783,85023,1296,11195,1423,1,0,N,N,N,CP_Phys,TT_Task,DT_FixedDUR2,RV_OK,TK_NotStart,BEW/2060,Re-Submission of shopdrawings,,5742.5,0,63,0,0,0,63,0,0,0,,,,2016-08-11 07:00,2016-08-21 17:00,,2014-01-27 15:30,2014-02-05 15:30,2014-01-27 15:30,2014-02-05 15:30,2014-01-27 15:30,2014-02-05 15:30,,2016-08-11 07:00,2016-08-21 17:00,,PT_Normal,,,,,8bgoya+DfE+svX1d3RBULA,xmqaFoOW60KZnDcB7UsYdw,,,N,0,0,,,2013-11-08 13:00,2013-11-12 11:41,admin,admin
784,85024,1296,11195,1422,1,0,N,N,N,CP_Drtn,TT_Task,DT_FixedDUR2,RV_OK,TK_NotStart,BEW/2050,Review and reply by Engineer,,8335.5,0,63,0,0,0,63,0,0,0,,,,2016-08-04 07:00,2016-08-10 17:00,,2014-01-20 15:30,2014-01-27 15:30,2014-01-20 15:30,2014-01-27 15:30,2014-01-20 15:30,2014-01-27 15:30,,2016-08-04 07:00,2016-08-10 17:00,,PT_Normal,,,,,rnlxV6L8NkOQ/QHynEiCcg,cQ0JW/mK2UC+lr0JsOMDFA,,,N,0,0,,,2013-11-08 13:00,2013-11-12 11:41,admin,admin
785,85025,1296,11195,1422,1,0,N,N,N,CP_Drtn,TT_Task,DT_FixedDUR2,RV_OK,TK_NotStart,BEW/2070,Approval of Shop Drawings,,8353.5,8353.5,63,0,0,0,63,0,0,0,,,,2016-08-22 07:00,2016-08-28 17:00,,2014-02-05 15:30,2014-02-12 15:30,2014-02-05 15:30,2014-02-12 15:30,2014-02-05 15:30,2014-02-12 15:30,,2016-08-22 07:00,2016-08-28 17:00,,PT_Normal,,,,,cod61wKICESo/IvVRJ4ssg,RVz+c/cNQEG67jDV9P7alA,,,N,0,0,,,2013-11-08 13:00,2013-11-12 11:41,admin,admin
786,85026,1296,11218,1423,1,0,N,N,N,CP_Phys,TT_Task,DT_FixedDUR2,RV_OK,TK_NotStart,BEW/2080,Preparation & Submission of shopdrawings,,5760.5,0,189,0,0,0,189,0,0,0,,,,2016-07-24 07:00,2016-08-21 17:00,,2014-01-02 15:30,2014-02-03 15:30,2014-01-02 15:30,2014-02-03 15:30,2014-01-02 15:30,2014-02-03 15:30,,2016-07-24 07:00,2016-08-21 17:00,,PT_Normal,,,,,QTFcpAR1XUqrrJm0Eh53bw,+rSy1D5hzEyrJwKgzziW/Q,,,N,0,0,,,2013-11-08 13:01,2013-11-12 11:12,admin,admin
787,85027,1296,11218,1422,1,0,N,N,N,CP_Drtn,TT_Task,DT_FixedDUR2,RV_OK,TK_NotStart,BEW/2110,Approval of Shop Drawings,,8371.5,8371.5,63,0,0,0,63,0,0,0,,,,2016-08-22 07:00,2016-08-28 17:00,,2014-02-03 15:30,2014-02-10 15:30,2014-02-03 15:30,2014-02-10 15:30,2014-02-03 15:30,2014-02-10 15:30,,2016-08-22 07:00,2016-08-28 17:00,,PT_Normal,,,,,HFpjxAhu/E2MjzM1h8emLg,RVz+c/cNQEG67jDV9P7alA,,,N,0,0,,,2013-11-08 13:01,2013-11-12 11:12,admin,admin
788,85028,1296,11156,1423,1,0,N,N,N,CP_Phys,TT_Task,DT_FixedDUR2,RV_OK,TK_NotStart,BEW/2120,Preparation & Submission of Cross Sections,,5634.5,0,225,0,0,0,225,0,0,0,,,,2016-06-28 07:00,2016-08-07 17:00,,2014-01-02 15:30,2014-02-09 15:30,2014-01-02 15:30,2014-02-09 15:30,2014-01-02 15:30,2014-02-09 15:30,,2016-06-28 07:00,2016-08-07 17:00,,PT_Normal,,,,,IJSKxEFXo0WvxHygeR0QgQ,SzQWSMqVW0eh7Hlv0rrAvg,,,N,0,0,,,2013-11-08 13:01,2013-11-12 11:10,admin,admin
789,85029,1296,11156,1422,1,0,N,N,N,CP_Drtn,TT_Task,DT_FixedDUR2,RV_OK,TK_NotStart,BEW/2130,Approval of Cross sections,,8191.5,8191.5,189,0,0,0,189,0,0,0,,,,2016-08-08 07:00,2016-08-28 17:00,,2014-02-09 15:30,2014-03-02 15:30,2014-02-09 15:30,2014-03-02 15:30,2014-02-09 15:30,2014-03-02 15:30,,2016-08-08 07:00,2016-08-28 17:00,,PT_Normal,,,,,s9JHYP9O5UqMX7CdZEemow,yGSInXkiJU+w+LT+ZxUlZw,,,N,0,0,,,2013-11-08 13:01,2013-11-12 11:10,admin,admin
790,85030,1296,10979,1423,1,0,N,N,N,CP_Phys,TT_Task,DT_FixedDUR2,RV_OK,TK_NotStart,BEW/DE/DS/1370,Survey Phase 10 OGL 130+000 to 136+500,,5454.5,0,90,0,0,0,90,0,0,0,,,,2016-06-14 07:00,2016-06-27 17:00,,2014-01-19 15:30,2014-02-02 15:30,2014-01-19 15:30,2014-02-02 15:30,2014-01-19 15:30,2014-02-02 15:30,,2016-06-14 07:00,2016-06-27 17:00,,PT_Normal,,,,,LP6TQwonLk+KZIxj4DndPg,4mL7ue/IHUCUaagI1EamGw,,,N,0,0,,,2013-11-08 19:40,2013-11-12 11:41,admin,admin
791,85031,1296,11227,1423,1,0,N,N,N,CP_Phys,TT_Task,DT_FixedDUR2,RV_OK,TK_NotStart,BEW/2140,Preparation & Submission of Cross Sections,,5544.5,0,225,0,0,0,225,0,0,0,,,,2016-06-28 07:00,2016-08-07 17:00,,2014-01-19 15:30,2014-02-23 15:30,2014-01-19 15:30,2014-02-23 15:30,2014-01-19 15:30,2014-02-23 15:30,,2016-06-28 07:00,2016-08-07 17:00,,PT_Normal,,,,,/cNaW/LI/EauzcF2wWDRzw,SzQWSMqVW0eh7Hlv0rrAvg,,,N,0,0,,,2013-11-08 19:48,2013-11-12 11:10,admin,admin
792,85032,1296,11227,1422,1,0,N,N,N,CP_Drtn,TT_Task,DT_FixedDUR2,RV_OK,TK_NotStart,BEW/2150,Approval of Cross sections,,8065.5,8065.5,189,0,0,0,189,0,0,0,,,,2016-08-08 07:00,2016-08-28 17:00,,2014-02-23 15:30,2014-03-16 15:30,2014-02-23 15:30,2014-03-16 15:30,2014-02-23 15:30,2014-03-16 15:30,,2016-08-08 07:00,2016-08-28 17:00,,PT_Normal,,,,,Ey+a909UHkGmEMqirCcjMA,yGSInXkiJU+w+LT+ZxUlZw,,,N,0,0,,,2013-11-08 19:48,2013-11-12 11:10,admin,admin
793,85033,1296,11203,1423,1,0,N,N,N,CP_Phys,TT_Task,DT_FixedDUR2,RV_OK,TK_NotStart,BEW/2160,Preparation & Submission of Cross Sections,,5454.5,0,225,0,0,0,225,0,0,0,,,,2016-06-28 07:00,2016-08-07 17:00,,2014-02-02 15:30,2014-03-09 15:30,2014-02-02 15:30,2014-03-09 15:30,2014-02-02 15:30,2014-03-09 15:30,,2016-06-28 07:00,2016-08-07 17:00,,PT_Normal,,,,,lKEdH3Z8OkOYosqVLiOQ0g,SzQWSMqVW0eh7Hlv0rrAvg,,,N,0,0,,,2013-11-08 19:48,2013-11-12 11:10,admin,admin
794,85034,1296,11203,1422,1,0,N,N,N,CP_Drtn,TT_Task,DT_FixedDUR2,RV_OK,TK_NotStart,BEW/2170,Approval of Cross sections,,7939.5,7939.5,189,0,0,0,189,0,0,0,,,,2016-08-08 07:00,2016-08-28 17:00,,2014-03-09 15:30,2014-03-30 15:30,2014-03-09 15:30,2014-03-30 15:30,2014-03-09 15:30,2014-03-30 15:30,,2016-08-08 07:00,2016-08-28 17:00,,PT_Normal,,,,,E71ZPkY86EmblwLdMcduNA,yGSInXkiJU+w+LT+ZxUlZw,,,N,0,0,,,2013-11-08 19:48,2013-11-12 11:10,admin,admin
795,85035,1296,11199,1423,1,0,N,N,N,CP_Phys,TT_Task,DT_FixedDUR2,RV_OK,TK_NotStart,BEW/2180,Preparation & Submission of Cross Sections,,5454.5,0,225,0,0,0,225,0,0,0,,,,2016-06-28 07:00,2016-08-07 17:00,,2014-02-02 15:30,2014-03-09 15:30,2014-02-02 15:30,2014-03-09 15:30,2014-02-02 15:30,2014-03-09 15:30,,2016-06-28 07:00,2016-08-07 17:00,,PT_Normal,,,,,t1ls+xAe6EmL+KfUv5suHA,SzQWSMqVW0eh7Hlv0rrAvg,,,N,0,0,,,2013-11-08 19:48,2013-11-12 11:41,admin,admin
796,85036,1296,11199,1422,1,0,N,N,N,CP_Drtn,TT_Task,DT_FixedDUR2,RV_OK,TK_NotStart,BEW/2190,Approval of Cross sections,,7939.5,7939.5,189,0,0,0,189,0,0,0,,,,2016-08-08 07:00,2016-08-28 17:00,,2014-03-09 15:30,2014-03-30 15:30,2014-03-09 15:30,2014-03-30 15:30,2014-03-09 15:30,2014-03-30 15:30,,2016-08-08 07:00,2016-08-28 17:00,,PT_Normal,,,,,zotJuoL09E+KnQfG8RUrfQ,yGSInXkiJU+w+LT+ZxUlZw,,,N,0,0,,,2013-11-08 19:48,2013-11-12 11:41,admin,admin
797,85037,1296,11159,1423,1,0,N,N,N,CP_Phys,TT_Task,DT_FixedDUR2,RV_OK,TK_NotStart,BEW/2200,Preparation & Submission of Cross Sections,,5544.5,0,225,0,0,0,225,0,0,0,,,,2016-06-28 07:00,2016-08-07 17:00,,2014-01-19 15:30,2014-02-23 15:30,2014-01-19 15:30,2014-02-23 15:30,2014-01-19 15:30,2014-02-23 15:30,,2016-06-28 07:00,2016-08-07 17:00,,PT_Normal,,,,,Cf7iEciF90eXIw+E6HX3eA,ntI3N+f7WESlsNCaEtOsgg,,,N,0,0,,,2013-11-08 19:48,2013-11-12 11:10,admin,admin
798,85038,1296,11159,1422,1,0,N,N,N,CP_Drtn,TT_Task,DT_FixedDUR2,RV_OK,TK_NotStart,BEW/2210,Approval of Cross sections,,8065.5,8065.5,189,0,0,0,189,0,0,0,,,,2016-08-08 07:00,2016-08-28 17:00,,2014-02-23 15:30,2014-03-16 15:30,2014-02-23 15:30,2014-03-16 15:30,2014-02-23 15:30,2014-03-16 15:30,,2016-08-08 07:00,2016-08-28 17:00,,PT_Normal,,,,,sr4yaAM2E0+qyfopijLMrA,TPJOIAtLGkyYW4zKctIU4g,,,N,0,0,,,2013-11-08 19:48,2013-11-12 11:10,admin,admin
799,85039,1296,11202,1423,1,0,N,N,N,CP_Phys,TT_Task,DT_FixedDUR2,RV_OK,TK_NotStart,BEW/2220,Preparation & Submission of Cross Sections,,5454.5,0,225,0,0,0,225,0,0,0,,,,2016-06-28 07:00,2016-08-07 17:00,,2014-02-02 15:30,2014-03-09 15:30,2014-02-02 15:30,2014-03-09 15:30,2014-02-02 15:30,2014-03-09 15:30,,2016-06-28 07:00,2016-08-07 17:00,,PT_Normal,,,,,dK+XOaf3ykWD+8EafoE9Ug,ntI3N+f7WESlsNCaEtOsgg,,,N,0,0,,,2013-11-08 19:48,2013-11-12 11:41,admin,admin
800,85040,1296,11202,1422,1,0,N,N,N,CP_Drtn,TT_Task,DT_FixedDUR2,RV_OK,TK_NotStart,BEW/2230,Approval of Cross sections,,7939.5,7939.5,189,0,0,0,189,0,0,0,,,,2016-08-08 07:00,2016-08-28 17:00,,2014-03-09 15:30,2014-03-30 15:30,2014-03-09 15:30,2014-03-30 15:30,2014-03-09 15:30,2014-03-30 15:30,,2016-08-08 07:00,2016-08-28 17:00,,PT_Normal,,,,,8+7QWMzAP0SSeE2YgaHFCw,TPJOIAtLGkyYW4zKctIU4g,,,N,0,0,,,2013-11-08 19:48,2013-11-12 11:41,admin,admin
801,85041,1296,11221,1423,1,0,N,N,N,CP_Phys,TT_Task,DT_FixedDUR2,RV_OK,TK_NotStart,BEW/2240,Preparation & Submission of Cross Sections,,5454.5,0,225,0,0,0,225,0,0,0,,,,2016-06-28 07:00,2016-08-07 17:00,,2014-02-02 15:30,2014-03-09 15:30,2014-02-02 15:30,2014-03-09 15:30,2014-02-02 15:30,2014-03-09 15:30,,2016-06-28 07:00,2016-08-07 17:00,,PT_Normal,,,,,H5lLROD2cUGXsdNIkTkW2g,ntI3N+f7WESlsNCaEtOsgg,,,N,0,0,,,2013-11-08 19:49,2013-11-11 23:03,admin,admin
802,85042,1296,11221,1422,1,0,N,N,N,CP_Drtn,TT_Task,DT_FixedDUR2,RV_OK,TK_NotStart,BEW/2250,Approval of Cross sections,,7939.5,7939.5,189,0,0,0,189,0,0,0,,,,2016-08-08 07:00,2016-08-28 17:00,,2014-03-09 15:30,2014-03-30 15:30,2014-03-09 15:30,2014-03-30 15:30,2014-03-09 15:30,2014-03-30 15:30,,2016-08-08 07:00,2016-08-28 17:00,,PT_Normal,,,,,a+Cb6KwwXUeMs+9yrHfyRw,TPJOIAtLGkyYW4zKctIU4g,,,N,0,0,,,2013-11-08 19:49,2013-11-11 15:51,admin,admin
803,85043,1296,11205,1423,1,0,N,N,N,CP_Phys,TT_Task,DT_FixedDUR2,RV_OK,TK_NotStart,BEW/2260,Preparation & Submission of Cross Sections,,5454.5,0,225,0,0,0,225,0,0,0,,,,2016-06-28 07:00,2016-08-07 17:00,,2014-02-02 15:30,2014-03-09 15:30,2014-02-02 15:30,2014-03-09 15:30,2014-02-02 15:30,2014-03-09 15:30,,2016-06-28 07:00,2016-08-07 17:00,,PT_Normal,,,,,6iFw9gomWEe0kuHVgaQxCg,ntI3N+f7WESlsNCaEtOsgg,,,N,0,0,,,2013-11-08 19:49,2013-11-12 11:41,admin,admin
804,85044,1296,11205,1422,1,0,N,N,N,CP_Drtn,TT_Task,DT_FixedDUR2,RV_OK,TK_NotStart,BEW/2270,Approval of Cross sections,,7939.5,7939.5,189,0,0,0,189,0,0,0,,,,2016-08-08 07:00,2016-08-28 17:00,,2014-03-09 15:30,2014-03-30 15:30,2014-03-09 15:30,2014-03-30 15:30,2014-03-09 15:30,2014-03-30 15:30,,2016-08-08 07:00,2016-08-28 17:00,,PT_Normal,,,,,B6WwsZ/N/kWr8hrVl+Eckw,TPJOIAtLGkyYW4zKctIU4g,,,N,0,0,,,2013-11-08 19:49,2013-11-12 11:41,admin,admin
805,85045,1296,11231,1423,1,0,N,N,N,CP_Phys,TT_Task,DT_FixedDUR2,RV_OK,TK_NotStart,BEW/2280,Preparation & Submission of Cross Sections,,5454.5,0,225,0,0,0,225,0,0,0,,,,2016-06-28 07:00,2016-08-07 17:00,,2014-02-02 15:30,2014-03-09 15:30,2014-02-02 15:30,2014-03-09 15:30,2014-02-02 15:30,2014-03-09 15:30,,2016-06-28 07:00,2016-08-07 17:00,,PT_Normal,,,,,N0JOyOWd5US81zXyO2AYcQ,ntI3N+f7WESlsNCaEtOsgg,,,N,0,0,,,2013-11-08 19:49,2013-11-12 11:41,admin,admin
806,85046,1296,11231,1422,1,0,N,N,N,CP_Drtn,TT_Task,DT_FixedDUR2,RV_OK,TK_NotStart,BEW/2290,Approval of Cross sections,,7939.5,7939.5,189,0,0,0,189,0,0,0,,,,2016-08-08 07:00,2016-08-28 17:00,,2014-03-09 15:30,2014-03-30 15:30,2014-03-09 15:30,2014-03-30 15:30,2014-03-09 15:30,2014-03-30 15:30,,2016-08-08 07:00,2016-08-28 17:00,,PT_Normal,,,,,wQe1E/1oQkGpo0Ly+P9oLg,TPJOIAtLGkyYW4zKctIU4g,,,N,0,0,,,2013-11-08 19:49,2013-11-12 11:41,admin,admin
807,85048,1296,10984,1423,1,0,N,N,N,CP_Drtn,TT_Task,DT_FixedDUR2,RV_OK,TK_NotStart,BEW/IN/GEN/6000,Finalisation of Traffic Sign Works,2547,5714.5,5418,126,0,126,54,126,0,0,0,,,,2016-07-21 07:00,2016-08-09 17:00,,2014-01-08 16:30,2014-01-29 16:30,2014-01-08 16:30,2014-01-29 16:30,2014-01-08 16:30,2014-01-29 16:30,,2016-07-21 07:00,2016-08-09 17:00,,PT_Normal,,,,,I0GAT2EYJkyAv5UTRPizYA,fk3uUL5MEEyMLFxFwdL94g,,,N,0,0,,,2013-11-11 14:08,2013-11-12 18:25,admin,admin
808,85049,1296,10984,1423,1,0,N,N,N,CP_Drtn,TT_Task,DT_FixedDUR2,RV_OK,TK_NotStart,BEW/IN/GEN/6010,Finalisation of Camera Foundation,2547,4095.5,3799,126,0,126,54,126,0,0,0,,,,2016-07-21 07:00,2016-08-09 17:00,,2014-09-28 15:30,2014-10-20 16:30,2014-09-28 15:30,2014-10-20 16:30,2014-09-28 15:30,2014-10-20 16:30,,2016-07-21 07:00,2016-08-09 17:00,,PT_Normal,,,,,62gfkpU2VEWu25GSA4UPcQ,7mqP9xg4HUy1r3z09KmGew,,,N,0,0,,,2013-11-11 14:11,2013-11-12 18:25,admin,admin
809,85050,1296,10984,1423,1,0,N,N,N,CP_Drtn,TT_Task,DT_FixedDUR2,RV_OK,TK_NotStart,BEW/IN/GEN/6020,Finalisation of  Flag Pole erection,2547,5948.5,5652,126,0,126,54,126,0,0,0,,,,2016-07-21 07:00,2016-08-09 17:00,,2013-12-02 16:30,2013-12-22 16:30,2013-12-02 16:30,2013-12-22 16:30,2013-12-02 16:30,2013-12-22 16:30,,2016-07-21 07:00,2016-08-09 17:00,,PT_Normal,,,,,Q7uiLy+t3k+Spbof7jCT5w,7mqP9xg4HUy1r3z09KmGew,,,N,0,0,,,2013-11-11 14:11,2013-11-12 18:25,admin,admin
810,85051,1296,10984,1423,1,0,N,N,N,CP_Drtn,TT_Task,DT_FixedDUR2,RV_OK,TK_NotStart,BEW/IN/GEN/6030,Finalisation of Road Marking,2547,5732.5,5436,126,0,126,54,126,0,0,0,,,,2016-07-21 07:00,2016-08-09 17:00,,2014-01-06 16:30,2014-01-27 16:30,2014-01-06 16:30,2014-01-27 16:30,2014-01-06 16:30,2014-01-27 16:30,,2016-07-21 07:00,2016-08-09 17:00,,PT_Normal,,,,,XIJJysID/Ee3oaYqwi1xGw,7mqP9xg4HUy1r3z09KmGew,,,N,0,0,,,2013-11-11 14:11,2013-11-12 18:25,admin,admin
811,85052,1296,10984,1423,1,0,N,N,N,CP_Drtn,TT_Task,DT_FixedDUR2,RV_OK,TK_NotStart,BEW/IN/GEN/6040,Finalisation of Road Studs and Bollards,2547,6416.5,6120,126,0,126,54,126,0,0,0,,,,2016-07-21 07:00,2016-08-09 17:00,,2013-09-16 08:00,2013-10-06 07:30,2013-09-16 08:00,2013-10-06 07:30,2013-09-16 08:00,2013-10-06 07:30,,2016-07-21 07:00,2016-08-09 17:00,,PT_Normal,,,,,GDRroc6Gy0Kq7xdo/yK76w,7mqP9xg4HUy1r3z09KmGew,,,N,0,0,,,2013-11-11 14:12,2013-11-12 18:25,admin,admin
812,85053,1296,10984,1423,1,0,N,N,N,CP_Drtn,TT_Task,DT_FixedDUR2,RV_OK,TK_NotStart,BEW/IN/GEN/6050,Finalisation of Chain Link Fence,2547,6785.5,6489,126,0,126,54,126,0,0,0,,,,2016-07-21 07:00,2016-08-09 17:00,,2013-07-16 07:00,2013-08-05 17:00,2013-07-16 07:00,2013-08-05 17:00,2013-07-16 07:00,2013-08-05 17:00,,2016-07-21 07:00,2016-08-09 17:00,,PT_Normal,,,,,DEhsjDBSx0SO/GOG2+gaWg,acNZPCVcuUC6KO0FFAmUbg,,,N,0,0,,,2013-11-11 14:21,2013-11-12 18:25,admin,admin
813,85054,1296,10984,1423,1,0,N,N,N,CP_Drtn,TT_Task,DT_FixedDUR2,RV_OK,TK_NotStart,BEW/IN/GEN/6060,Finalisation of W Beam,2547,6785.5,6489,126,0,126,54,126,0,0,0,,,,2016-07-21 07:00,2016-08-09 17:00,,2013-07-16 07:00,2013-08-05 17:00,2013-07-16 07:00,2013-08-05 17:00,2013-07-16 07:00,2013-08-05 17:00,,2016-07-21 07:00,2016-08-09 17:00,,PT_Normal,,,,,j0Ph16y/L0e4nFZohHgmtg,wruiLGeSnUK2/H6Mg7Yx8g,,,N,0,0,,,2013-11-11 14:21,2013-11-12 18:25,admin,admin
814,85055,1296,10952,1422,1,0,N,N,N,CP_Phys,TT_Task,DT_FixedDUR2,RV_OK,TK_NotStart,BEW/DE/DS/1380,Approval of Polythene sheet,,6266,1672.5,189,0,0,0,189,0,0,0,,,,2015-07-27 09:00,2015-08-17 09:00,,2013-08-30 07:00,2013-09-19 17:00,2013-08-30 07:00,2013-09-19 17:00,2013-08-30 07:00,2013-09-19 17:00,,2015-07-27 09:00,2015-08-17 09:00,,PT_Normal,,,,,ccgBMjUTuESYZWpO9QOlGQ,F3AO6+hzE0+D0xV4PSlkoA,,,N,0,0,,,2013-11-12 13:00,2013-11-12 13:17,admin,admin
815,85056,1296,10952,1422,1,0,N,N,N,CP_Phys,TT_Task,DT_FixedDUR2,RV_OK,TK_NotStart,BEW/DE/DS/1390,Approval of RC pipes & fittings,,9666,9666,189,0,0,0,189,0,0,0,,,,2016-08-08 07:00,2016-08-28 17:00,,2013-08-30 07:00,2013-09-19 17:00,2013-08-30 07:00,2013-09-19 17:00,2013-08-30 07:00,2013-09-19 17:00,,2016-08-08 07:00,2016-08-28 17:00,,PT_Normal,,,,,GI1LhjCSf0SstyoWYCZvvQ,dIA2Zg1nB0usJHTsj6lfLQ,,,N,0,0,,,2013-11-12 13:00,2013-11-12 13:17,admin,admin
816,85057,1296,10952,1422,1,0,N,N,N,CP_Phys,TT_Task,DT_FixedDUR2,RV_OK,TK_NotStart,BEW/DE/DS/1400,Approval of Cement Source,,4934,358.5,189,0,0,0,189,0,0,0,,,,2015-03-01 09:00,2015-03-22 09:00,,2013-08-30 07:00,2013-09-19 17:00,2013-08-30 07:00,2013-09-19 17:00,2013-08-30 07:00,2013-09-19 17:00,,2015-03-01 09:00,2015-03-22 09:00,,PT_Normal,,,,,UH7hWPbHYkWk5rsH3hFRtA,dIA2Zg1nB0usJHTsj6lfLQ,,,N,0,0,,,2013-11-12 13:01,2013-11-12 13:17,admin,admin
817,85058,1296,10952,1422,1,0,N,N,N,CP_Phys,TT_Task,DT_FixedDUR2,RV_OK,TK_NotStart,BEW/DE/DS/1410,Approval of UPVC Pipes & Fittings,,9666,9666,189,0,0,0,189,0,0,0,,,,2016-08-08 07:00,2016-08-28 17:00,,2013-08-30 07:00,2013-09-19 17:00,2013-08-30 07:00,2013-09-19 17:00,2013-08-30 07:00,2013-09-19 17:00,,2016-08-08 07:00,2016-08-28 17:00,,PT_Normal,,,,,+qOzoD/7oUaMx2yhs7s1zw,zV2zKlyr7Emg8tCble4cGg,,,N,0,0,,,2013-11-12 13:01,2013-11-12 13:17,admin,admin
818,85059,1296,10952,1422,1,0,N,N,N,CP_Phys,TT_Task,DT_FixedDUR2,RV_OK,TK_NotStart,BEW/DE/DS/1420,Approval of Performed fillers,,9666,9666,189,0,0,0,189,0,0,0,,,,2016-08-08 07:00,2016-08-28 17:00,,2013-08-30 07:00,2013-09-19 17:00,2013-08-30 07:00,2013-09-19 17:00,2013-08-30 07:00,2013-09-19 17:00,,2016-08-08 07:00,2016-08-28 17:00,,PT_Normal,,,,,56hBDuA0tEy+/2tBOBEpuw,zV2zKlyr7Emg8tCble4cGg,,,N,0,0,,,2013-11-12 13:01,2013-11-12 13:17,admin,admin
819,85060,1296,10952,1422,1,0,N,N,N,CP_Phys,TT_Task,DT_FixedDUR2,RV_OK,TK_NotStart,BEW/DE/DS/1430,Approval of Concrete Mix Designs,,4934,358.5,189,0,0,0,189,0,0,0,,,,2015-03-01 09:00,2015-03-22 09:00,,2013-08-30 07:00,2013-09-19 17:00,2013-08-30 07:00,2013-09-19 17:00,2013-08-30 07:00,2013-09-19 17:00,,2015-03-01 09:00,2015-03-22 09:00,,PT_Normal,,,,,mnglLlVT/UC48ZGqVtUSPA,zV2zKlyr7Emg8tCble4cGg,,,N,0,0,,,2013-11-12 13:01,2013-11-12 13:17,admin,admin
820,85061,1296,10952,1422,1,0,N,N,N,CP_Phys,TT_Task,DT_FixedDUR2,RV_OK,TK_NotStart,BEW/DE/DS/1440,Approval of Steel Reinforcement,,4934,358.5,189,0,0,0,189,0,0,0,,,,2015-03-01 09:00,2015-03-22 09:00,,2013-08-30 07:00,2013-09-19 17:00,2013-08-30 07:00,2013-09-19 17:00,2013-08-30 07:00,2013-09-19 17:00,,2015-03-01 09:00,2015-03-22 09:00,,PT_Normal,,,,,ZY2BMhJOqUGdvZWBgJBB1w,zV2zKlyr7Emg8tCble4cGg,,,N,0,0,,,2013-11-12 13:01,2013-11-12 13:17,admin,admin
821,85062,1296,10952,1422,1,0,N,N,N,CP_Phys,TT_Task,DT_FixedDUR2,RV_OK,TK_NotStart,BEW/DE/DS/1450,Approval of Waterproofing membrane and protection board,,6396,1802.5,189,0,0,0,189,0,0,0,,,,2015-08-10 14:00,2015-08-31 14:00,,2013-08-30 07:00,2013-09-19 17:00,2013-08-30 07:00,2013-09-19 17:00,2013-08-30 07:00,2013-09-19 17:00,,2015-08-10 14:00,2015-08-31 14:00,,PT_Normal,,,,,sHF1uQJt4kKJwHVvtK/lwA,zV2zKlyr7Emg8tCble4cGg,,,N,0,0,,,2013-11-12 13:04,2013-11-12 13:17,admin,admin
822,85063,1296,10952,1422,1,0,N,N,N,CP_Phys,TT_Task,DT_FixedDUR2,RV_OK,TK_NotStart,BEW/DE/DS/1460,Approval of Epoxy / cementitious grout for bearings,,6396,1802.5,189,0,0,0,189,0,0,0,,,,2015-08-10 14:00,2015-08-31 14:00,,2013-08-30 07:00,2013-09-19 17:00,2013-08-30 07:00,2013-09-19 17:00,2013-08-30 07:00,2013-09-19 17:00,,2015-08-10 14:00,2015-08-31 14:00,,PT_Normal,,,,,OfaCke8Qu0WqSlxAYE9olw,zV2zKlyr7Emg8tCble4cGg,,,N,0,0,,,2013-11-12 13:04,2013-11-12 13:17,admin,admin
