,task_id,proj_id,wbs_id,clndr_id,phys_complete_pct,rev_fdbk_flag,lock_plan_flag,auto_compute_act_flag,complete_pct_type,task_type,duration_type,status_code,task_code,task_name,rsrc_id,total_float_hr_cnt,free_float_hr_cnt,remain_drtn_hr_cnt,act_work_qty,remain_work_qty,target_work_qty,target_drtn_hr_cnt,target_equip_qty,act_equip_qty,remain_equip_qty,cstr_date,act_start_date,act_end_date,late_start_date,late_end_date,expect_end_date,early_start_date,early_end_date,restart_date,reend_date,target_start_date,target_end_date,rem_late_start_date,rem_late_end_date,cstr_type,priority_type,suspend_date,resume_date,float_path,float_path_order,guid,tmpl_guid,cstr_date2,cstr_type2,driving_path_flag,act_this_per_work_qty,act_this_per_equip_qty,external_early_start_date,external_late_end_date,create_date,update_date,create_user,update_user,location_id
0,127643,6764,35200,6640,0,N,N,N,CP_Drtn,TT_Task,DT_FixedDrtn,TK_NotStart,HHI.1502,Perform Final Inspection & Handover to CLient,,220,220,10,0,0,0,10,0,0,0,,,,2015-02-04 16:00,2015-02-05 16:00,,2015-01-10 16:00,2015-01-11 16:00,2015-01-10 16:00,2015-01-11 16:00,2015-01-10 16:00,2015-01-11 16:00,2015-02-04 16:00,2015-02-05 16:00,,PT_Normal,,,,,ZV/jVlIhTdakyW/8TOuSpw,,,,N,0,0,,,2014-02-17 15:27,2014-03-01 17:08,admin,admin,
1,127644,6764,35201,6640,0,N,N,N,CP_Drtn,TT_Task,DT_FixedDrtn,TK_NotStart,HHI.1503,Perform Final Inspection & Handover to CLient,,0,0,10,0,0,0,10,0,0,0,,,,2015-02-04 16:00,2015-02-05 16:00,,2015-02-04 16:00,2015-02-05 16:00,2015-02-04 16:00,2015-02-05 16:00,2015-02-04 16:00,2015-02-05 16:00,2015-02-04 16:00,2015-02-05 16:00,,PT_Normal,,,,,MBGKlQ9kRpG1Sd5ULwE8JA,,,,Y,0,0,,,2014-02-17 15:27,2014-03-01 17:08,admin,admin,
2,127645,6764,35202,6640,0,N,N,N,CP_Drtn,TT_Mile,DT_FixedDrtn,TK_NotStart,HHI.1263,HHI Hand over Tank#1(10GDK51BB001) Foundation  to AZ,,0,0,0,0,0,0,0,0,0,0,2014-01-30 07:00,,,2014-01-30 07:00,2014-01-30 07:00,,2014-01-30 07:00,2014-01-30 07:00,2014-01-30 07:00,2014-01-30 07:00,2014-01-30 07:00,2014-01-30 07:00,2014-01-30 07:00,2014-01-30 07:00,CS_MSO,PT_Normal,,,,,p0VivTFNQ9ymByGLGuCHBA,mZLpwe/EQNeoWPSCAEM8Mw,,,N,0,0,,,2014-02-17 15:27,2014-03-01 14:49,admin,admin,
3,127646,6764,35202,6640,0,N,N,N,CP_Drtn,TT_Task,DT_FixedDrtn,TK_NotStart,HHI.1264,AZ Check Tank#1 Foundation Levelness prior to Mechanical Works,,480,0,10,0,0,0,10,0,0,0,,,,2014-03-27 07:00,2014-03-27 17:00,,2014-01-30 07:00,2014-01-30 17:00,2014-01-30 07:00,2014-01-30 17:00,2014-01-30 07:00,2014-01-30 17:00,2014-03-27 07:00,2014-03-27 17:00,,PT_Normal,,,,,0y4Wa9NOQmin5d0Q9PnZZw,,,,N,0,0,,,2014-02-17 15:27,2014-03-01 17:06,admin,admin,
4,127647,6764,35202,6640,0,N,N,N,CP_Drtn,TT_Mile,DT_FixedDrtn,TK_NotStart,HHI.1265,HHI Hand over Tank#2(10GDK52BB001) Foundation to AZ,,450,0,0,0,0,0,0,0,0,0,,,,2014-04-03 07:00,2014-04-03 07:00,,2014-02-10 07:00,2014-02-10 07:00,2014-02-10 07:00,2014-02-10 07:00,2014-02-10 07:00,2014-02-10 07:00,2014-04-03 07:00,2014-04-03 07:00,,PT_Normal,,,,,ObWHK79dSPWw1Os0EFy5jw,jZBqjg4eR2uWUdRphzKneQ,,,N,0,0,,,2014-02-17 15:27,2014-03-01 17:06,admin,admin,
5,127648,6764,35202,6640,0,N,N,N,CP_Drtn,TT_Task,DT_FixedDrtn,TK_NotStart,HHI.1266,AZ Check Tank#2 Foundation Levelness prior to Mechanical Works,,450,0,10,0,0,0,10,0,0,0,,,,2014-04-03 07:00,2014-04-03 17:00,,2014-02-10 07:00,2014-02-10 17:00,2014-02-10 07:00,2014-02-10 17:00,2014-02-10 07:00,2014-02-10 17:00,2014-04-03 07:00,2014-04-03 17:00,,PT_Normal,,,,,zxZR7YQiRNySUwDRzVWEmw,0G+Ov/CT2EyBqY3FlGkIDA,,,N,0,0,,,2014-02-17 15:27,2014-03-01 17:06,admin,admin,
6,127649,6764,35205,6640,0,N,N,N,CP_Drtn,TT_Task,DT_FixedDrtn,TK_NotStart,HHI.1362,Erect & Tack Shell Course # 5 & Install Stagging Brackets,,450,0,20,0,380,380,20,48,0,48,,,,2014-06-14 07:00,2014-06-15 17:00,,2014-04-22 07:00,2014-04-23 17:00,2014-04-22 07:00,2014-04-23 17:00,2014-04-22 07:00,2014-04-23 17:00,2014-06-14 07:00,2014-06-15 17:00,,PT_Normal,,,,,M40TaquISGWlw3hozEErpw,ecDUDG8kRm2JZAKMZ9pG6w,,,N,0,0,,,2014-02-17 15:27,2014-03-01 17:06,admin,admin,
7,127650,6764,35205,6640,0,N,N,N,CP_Drtn,TT_Task,DT_FixedDrtn,TK_NotStart,HHI.1363,Weld Outer Vertical Seam /Install the Stairways support on Shell,,450,0,10,0,167.111111,167.111111,10,33.066667,0,33.066667,,,,2014-06-15 07:00,2014-06-15 17:00,,2014-04-23 07:00,2014-04-23 17:00,2014-04-23 07:00,2014-04-23 17:00,2014-04-23 07:00,2014-04-23 17:00,2014-06-15 07:00,2014-06-15 17:00,,PT_Normal,,,,,tTe1rWRsSTqGLlCeg3xv4Q,yYu4cW08SCmEyuZcw/ZGvA,,,N,0,0,,,2014-02-17 15:27,2014-03-01 17:06,admin,admin,
8,127651,6764,35205,6640,0,N,N,N,CP_Drtn,TT_Task,DT_FixedDrtn,TK_NotStart,HHI.1364,Backgouge & NDT Inside Vertical Seam,,450,0,10,0,90.666666,90.666666,10,42.666666,0,42.666666,,,,2014-06-15 07:00,2014-06-15 17:00,,2014-04-23 07:00,2014-04-23 17:00,2014-04-23 07:00,2014-04-23 17:00,2014-04-23 07:00,2014-04-23 17:00,2014-06-15 07:00,2014-06-15 17:00,,PT_Normal,,,,,nH+csJYARj+tZei1BRpjNw,YFBBscqRSPOQ4LJHsNkQ9w,,,N,0,0,,,2014-02-17 15:27,2014-03-01 17:06,admin,admin,
9,127652,6764,35205,6640,0,N,N,N,CP_Drtn,TT_Task,DT_FixedDrtn,TK_NotStart,HHI.1366,"""""Weld Outer Horizontal Seam between Shell Course # 4 & 5""""",,450,0,20,0,320,320,20,85.333334,0,85.333334,,,,2014-06-17 07:00,2014-06-18 17:00,,2014-04-26 07:00,2014-04-27 17:00,2014-04-26 07:00,2014-04-27 17:00,2014-04-26 07:00,2014-04-27 17:00,2014-06-17 07:00,2014-06-18 17:00,,PT_Normal,,,,,5KF7E0CuSsSEeEm3c/T/Mw,fEGyf71ySF2jf/P9NvOMtA,,,N,0,0,,,2014-02-17 15:27,2014-03-01 17:06,admin,admin,
10,127653,6764,35205,6640,0,N,N,N,CP_Drtn,TT_Task,DT_FixedDrtn,TK_NotStart,HHI.1367,"""""Backgouge & NDT Inside Horizontal Seam between Shell Course# 4 & 5""""",,450,0,10,0,80,80,10,33.066667,0,33.066667,,,,2014-06-19 07:00,2014-06-19 17:00,,2014-04-28 07:00,2014-04-28 17:00,2014-04-28 07:00,2014-04-28 17:00,2014-04-28 07:00,2014-04-28 17:00,2014-06-19 07:00,2014-06-19 17:00,,PT_Normal,,,,,6fXg70IfQSSjKCJuQ3w4Lg,8AhkpB7IS1iyLoc9QJjQag,,,N,0,0,,,2014-02-17 15:27,2014-03-01 17:06,admin,admin,
11,127654,6764,35205,6640,0,N,N,N,CP_Drtn,TT_Task,DT_FixedDrtn,TK_NotStart,HHI.1368,"Weld Inner Horizontal Seam between Shell Course # 4 & 5""""",,450,0,10,0,405.333336,405.333336,10,85.333333,0,85.333333,,,,2014-06-21 07:00,2014-06-21 17:00,,2014-04-29 07:00,2014-04-29 17:00,2014-04-29 07:00,2014-04-29 17:00,2014-04-29 07:00,2014-04-29 17:00,2014-06-21 07:00,2014-06-21 17:00,,PT_Normal,,,,,FYEJfR/fSOqNyJbqrM5uJg,g/pA6eEKR4qRgkfP7LFxrA,,,N,0,0,,,2014-02-17 15:27,2014-03-01 17:06,admin,admin,
12,127655,6764,35205,6640,0,N,N,N,CP_Drtn,TT_Task,DT_FixedDrtn,TK_NotStart,HHI.1369,Quailty Check(Visual Inspection),,450,0,70,0,27.111111,27.111111,70,33.066667,0,33.066667,,,,2014-06-14 07:00,2014-06-21 17:00,,2014-04-22 07:00,2014-04-29 17:00,2014-04-22 07:00,2014-04-29 17:00,2014-04-22 07:00,2014-04-29 17:00,2014-06-14 07:00,2014-06-21 17:00,,PT_Normal,,,,,GPiiNFtCRxyZYoh8l22m7w,ESR2Ruq8Sq+kiwB5xqCmrA,,,N,0,0,,,2014-02-17 15:27,2014-03-01 17:06,admin,admin,
13,127656,6764,35205,6640,0,N,N,N,CP_Drtn,TT_Task,DT_FixedDrtn,TK_NotStart,HHI.1365,Weld Inside Vertical Seam,,450,0,10,0,160,160,10,33.066667,0,33.066667,,,,2014-06-16 07:00,2014-06-16 17:00,,2014-04-24 07:00,2014-04-24 17:00,2014-04-24 07:00,2014-04-24 17:00,2014-04-24 07:00,2014-04-24 17:00,2014-06-16 07:00,2014-06-16 17:00,,PT_Normal,,,,,yEF+djD3Thy/BC6p+szSWA,SQxH3Jg2SrCb+RjqVA+lkg,,,N,0,0,,,2014-02-17 15:27,2014-03-01 17:06,admin,admin,
14,127657,6764,35206,6640,0,N,N,N,CP_Drtn,TT_Task,DT_FixedDrtn,TK_NotStart,HHI.1378,Perform RT for Tank#1 & #2,,460,10,10,0,0,0,10,0,0,0,,,,2014-06-25 07:00,2014-06-25 17:00,,2014-05-03 07:00,2014-05-03 17:00,2014-05-03 07:00,2014-05-03 17:00,2014-05-03 07:00,2014-05-03 17:00,2014-06-25 07:00,2014-06-25 17:00,,PT_Normal,,,,,0Ioadf3NSXivh89sXnYGSw,/6cai9VLTE2sY94MF15f8w,,,N,0,0,,,2014-02-17 15:27,2014-03-01 17:06,admin,admin,
15,127658,6764,35207,6640,0,N,N,N,CP_Drtn,TT_Task,DT_FixedDrtn,TK_NotStart,HHI.1370,Erect & Tack Shell Course # 5 & Install Stagging Brackets,,460,0,20,0,440,440,20,48,0,48,,,,2014-06-17 07:00,2014-06-18 17:00,,2014-04-24 07:00,2014-04-26 17:00,2014-04-24 07:00,2014-04-26 17:00,2014-04-24 07:00,2014-04-26 17:00,2014-06-17 07:00,2014-06-18 17:00,,PT_Normal,,,,,0m61HSQ5S2qhW6eOhylmOg,64UoKPZrS12VGLedBpq9sw,,,N,0,0,,,2014-02-17 15:27,2014-03-01 17:06,admin,admin,
16,127659,6764,35207,6640,0,N,N,N,CP_Drtn,TT_Task,DT_FixedDrtn,TK_NotStart,HHI.1371,Weld Outer Vertical Seam,,460,0,10,0,160,160,10,33.066667,0,33.066667,,,,2014-06-18 07:00,2014-06-18 17:00,,2014-04-26 07:00,2014-04-26 17:00,2014-04-26 07:00,2014-04-26 17:00,2014-04-26 07:00,2014-04-26 17:00,2014-06-18 07:00,2014-06-18 17:00,,PT_Normal,,,,,w3JyrzJeRmqAYOr91IxN2Q,H6CD4g14ShSoOcQ0QjN+OQ,,,N,0,0,,,2014-02-17 15:27,2014-03-01 17:06,admin,admin,
17,127660,6764,35207,6640,0,N,N,N,CP_Drtn,TT_Task,DT_FixedDrtn,TK_NotStart,HHI.1372,Backgouge & NDT Inside Vertical Seam,,460,0,10,0,80,80,10,42.666666,0,42.666666,,,,2014-06-18 07:00,2014-06-18 17:00,,2014-04-26 07:00,2014-04-26 17:00,2014-04-26 07:00,2014-04-26 17:00,2014-04-26 07:00,2014-04-26 17:00,2014-06-18 07:00,2014-06-18 17:00,,PT_Normal,,,,,7/W93dF7SuqXMuWh85wjLA,H0TiJRkQQeywy8GWoKp5Lw,,,N,0,0,,,2014-02-17 15:27,2014-03-01 17:06,admin,admin,
18,127661,6764,35207,6640,0,N,N,N,CP_Drtn,TT_Task,DT_FixedDrtn,TK_NotStart,HHI.1373,Weld Inside Vertical Seam,,460,0,10,0,167.111111,167.111111,10,33.066667,0,33.066667,,,,2014-06-19 07:00,2014-06-19 17:00,,2014-04-27 07:00,2014-04-27 17:00,2014-04-27 07:00,2014-04-27 17:00,2014-04-27 07:00,2014-04-27 17:00,2014-06-19 07:00,2014-06-19 17:00,,PT_Normal,,,,,NhsDpGZ4QV6DoEMEOh+ubg,V+1EL0L8QtyVl2Bkud8JfA,,,N,0,0,,,2014-02-17 15:27,2014-03-01 17:06,admin,admin,
19,127662,6764,35207,6640,0,N,N,N,CP_Drtn,TT_Task,DT_FixedDrtn,TK_NotStart,HHI.1375,"""""Backgouge & NDT Inside Horizontal Seam between Shell Course# 4 & 5""""",,460,0,10,0,108.444444,108.444444,10,33.066667,0,33.066667,,,,2014-06-23 07:00,2014-06-23 17:00,,2014-04-30 07:00,2014-04-30 17:00,2014-04-30 07:00,2014-04-30 17:00,2014-04-30 07:00,2014-04-30 17:00,2014-06-23 07:00,2014-06-23 17:00,,PT_Normal,,,,,VytPsBKPT6iGbNLTVH5XUA,anI+F95eQHKxg5XvPKYMyA,,,N,0,0,,,2014-02-17 15:27,2014-03-01 17:06,admin,admin,
20,127663,6764,35207,6640,0,N,N,N,CP_Drtn,TT_Task,DT_FixedDrtn,TK_NotStart,HHI.1376,"Weld Inner Horizontal Seam between Shell Course #4 & 5""""",,460,0,10,0,405.333336,405.333336,10,85.333333,0,85.333333,,,,2014-06-24 07:00,2014-06-24 17:00,,2014-05-01 07:00,2014-05-01 17:00,2014-05-01 07:00,2014-05-01 17:00,2014-05-01 07:00,2014-05-01 17:00,2014-06-24 07:00,2014-06-24 17:00,,PT_Normal,,,,,F+Y/u5U8TzmDa9pOALv5ww,8kTZEi6uQw+yjcdvBeBSdg,,,N,0,0,,,2014-02-17 15:27,2014-03-01 17:06,admin,admin,
21,127664,6764,35207,6640,0,N,N,N,CP_Drtn,TT_Task,DT_FixedDrtn,TK_NotStart,HHI.1377,Quailty Check(Visual Inspection),,460,0,60,0,55.555555,55.555555,60,33.066667,0,33.066667,,,,2014-06-18 07:00,2014-06-24 17:00,,2014-04-26 07:00,2014-05-01 17:00,2014-04-26 07:00,2014-05-01 17:00,2014-04-26 07:00,2014-05-01 17:00,2014-06-18 07:00,2014-06-24 17:00,,PT_Normal,,,,,bziQTvmMRYiB4KYhMsKwXg,jwSRPut+S6+roZdJ8tHZYw,,,N,0,0,,,2014-02-17 15:27,2014-03-01 17:06,admin,admin,
22,127665,6764,35207,6640,0,N,N,N,CP_Drtn,TT_Task,DT_FixedDrtn,TK_NotStart,HHI.1374,"""""Weld Outer Horizontal Seam between Shell Course # 4 & 5""""",,460,0,20,0,341.333334,341.333334,20,85.333334,0,85.333334,,,,2014-06-21 07:00,2014-06-22 17:00,,2014-04-28 07:00,2014-04-29 17:00,2014-04-28 07:00,2014-04-29 17:00,2014-04-28 07:00,2014-04-29 17:00,2014-06-21 07:00,2014-06-22 17:00,,PT_Normal,,,,,mzBC01MZT6qJJa8yr+Vl1w,meKlOlclSNCNkxYikMfnRQ,,,N,0,0,,,2014-02-17 15:27,2014-03-01 17:06,admin,admin,
23,127666,6764,35209,6640,0,N,N,N,CP_Drtn,TT_Task,DT_FixedDrtn,TK_NotStart,HHI.1413,Erect & Tack Shell Course # 7 & Install Stagging Brackets,,450,0,20,0,400,400,20,48,0,48,,,,2014-08-10 11:00,2014-08-12 11:00,,2014-06-05 07:00,2014-06-07 17:00,2014-06-05 07:00,2014-06-07 17:00,2014-06-05 07:00,2014-06-07 17:00,2014-08-10 11:00,2014-08-12 11:00,,PT_Normal,,,,,vmz+RQbmSme6ddPPHa7wGw,of2PSc10QNyU1ZYjeFrnJA,,,N,0,0,,,2014-02-17 15:27,2014-03-01 17:06,admin,admin,
24,127667,6764,35209,6640,0,N,N,N,CP_Drtn,TT_Task,DT_FixedDrtn,TK_NotStart,HHI.1414,Weld Outer Vertical Seam /Install the Stairways support on Shell,,450,0,10,0,160,160,10,42.666666,0,42.666666,,,,2014-08-11 11:00,2014-08-12 11:00,,2014-06-07 07:00,2014-06-07 17:00,2014-06-07 07:00,2014-06-07 17:00,2014-06-07 07:00,2014-06-07 17:00,2014-08-11 11:00,2014-08-12 11:00,,PT_Normal,,,,,rPfKba2XRdORCcjDcOkIyg,ehStpYPjQzuMoSj84qWTqg,,,N,0,0,,,2014-02-17 15:27,2014-03-01 17:06,admin,admin,
25,127668,6764,35209,6640,0,N,N,N,CP_Drtn,TT_Task,DT_FixedDrtn,TK_NotStart,HHI.1415,Backgouge & NDT Inside Vertical Seam,,450,0,10,0,90.666666,90.666666,10,42.666666,0,42.666666,,,,2014-08-11 11:00,2014-08-12 11:00,,2014-06-07 07:00,2014-06-07 17:00,2014-06-07 07:00,2014-06-07 17:00,2014-06-07 07:00,2014-06-07 17:00,2014-08-11 11:00,2014-08-12 11:00,,PT_Normal,,,,,xOStUDsfSQyBush7UQGS0w,mMz7M+EzShWrI24PqPUSsw,,,N,0,0,,,2014-02-17 15:27,2014-03-01 17:06,admin,admin,
26,127669,6764,35209,6640,0,N,N,N,CP_Drtn,TT_Task,DT_FixedDrtn,TK_NotStart,HHI.1416,Weld Inside Vertical Seam,,450,0,10,0,160,160,10,42.666666,0,42.666666,,,,2014-08-12 11:00,2014-08-13 11:00,,2014-06-08 07:00,2014-06-08 17:00,2014-06-08 07:00,2014-06-08 17:00,2014-06-08 07:00,2014-06-08 17:00,2014-08-12 11:00,2014-08-13 11:00,,PT_Normal,,,,,urtFbUz+Qw+r2qMj1CAJfA,CZDTqVohTcmJlKjd8Mtugg,,,N,0,0,,,2014-02-17 15:27,2014-03-01 17:06,admin,admin,
27,127670,6764,35209,6640,0,N,N,N,CP_Drtn,TT_Task,DT_FixedDrtn,TK_NotStart,HHI.1417,"""""Weld Outer Horizontal Seam between Shell Course # 6 & 7""""",,450,0,10,0,160,160,10,33.066667,0,33.066667,,,,2014-08-13 11:00,2014-08-14 11:00,,2014-06-09 07:00,2014-06-09 17:00,2014-06-09 07:00,2014-06-09 17:00,2014-06-09 07:00,2014-06-09 17:00,2014-08-13 11:00,2014-08-14 11:00,,PT_Normal,,,,,7RVN9OtpSMKnYWjgTATszg,+qucGPuaT4i5hl3MXazLlw,,,N,0,0,,,2014-02-17 15:27,2014-03-01 17:06,admin,admin,
28,127671,6764,35209,6640,0,N,N,N,CP_Drtn,TT_Task,DT_FixedDrtn,TK_NotStart,HHI.1418,"""""Backgouge & NDT Inside Horizontal Seam between Shell Course#6 & 7""""",,450,0,10,0,122.666664,122.666664,10,42.666667,0,42.666667,,,,2014-08-14 11:00,2014-08-15 13:30,,2014-06-10 07:00,2014-06-10 17:00,2014-06-10 07:00,2014-06-10 17:00,2014-06-10 07:00,2014-06-10 17:00,2014-08-14 11:00,2014-08-15 13:30,,PT_Normal,,,,,JbyDvTBeQHOT23LTyN8/MA,kv4rOcQMQFewlX30sN9nmA,,,N,0,0,,,2014-02-17 15:27,2014-03-01 17:06,admin,admin,
29,127672,6764,35209,6640,0,N,N,N,CP_Drtn,TT_Task,DT_FixedDrtn,TK_NotStart,HHI.1419,"Weld Inner Horizontal Seam between Shell Course #6 & 7""""",,450,0,10,0,188.444444,188.444444,10,33.066667,0,33.066667,,,,2014-08-15 13:30,2014-08-16 16:00,,2014-06-11 07:00,2014-06-11 17:00,2014-06-11 07:00,2014-06-11 17:00,2014-06-11 07:00,2014-06-11 17:00,2014-08-15 13:30,2014-08-16 16:00,,PT_Normal,,,,,caTU93ebQnOwfg69txtTuQ,GsfyLVimQku405T+Fr3/zw,,,N,0,0,,,2014-02-17 15:27,2014-03-01 17:06,admin,admin,
30,127673,6764,35209,6640,0,N,N,N,CP_Drtn,TT_Task,DT_FixedDrtn,TK_NotStart,HHI.1421,Quailty Check(Visual Inspection & PT for Shell Nozzle & Pad),,450,0,60,0,55.555555,55.555555,60,33.066667,0,33.066667,,,,2014-08-10 11:00,2014-08-16 16:00,,2014-06-05 07:00,2014-06-11 17:00,2014-06-05 07:00,2014-06-11 17:00,2014-06-05 07:00,2014-06-11 17:00,2014-08-10 11:00,2014-08-16 16:00,,PT_Normal,,,,,PGMckB/ESlOLVjCGM/pKMA,/yTmTaYBSzWSD+fag9COZQ,,,N,0,0,,,2014-02-17 15:27,2014-03-01 17:06,admin,admin,
31,127674,6764,35209,6640,0,N,N,N,CP_Drtn,TT_Task,DT_FixedDrtn,TK_NotStart,HHI.1420,"Fit,Weld Nozzle on Shell",,450,0,10,0,0,0,10,0,0,0,,,,2014-08-15 13:30,2014-08-16 16:00,,2014-06-11 07:00,2014-06-11 17:00,2014-06-11 07:00,2014-06-11 17:00,2014-06-11 07:00,2014-06-11 17:00,2014-08-15 13:30,2014-08-16 16:00,,PT_Normal,,,,,TOHKonJ4TlazXDHZmgmCLQ,,,,N,0,0,,,2014-02-17 15:27,2014-03-01 17:06,admin,admin,
32,127675,6764,35210,6640,0,N,N,N,CP_Drtn,TT_Task,DT_FixedDrtn,TK_NotStart,HHI.1422,Perform RT for Tank#1 & #2,,450,0,10,0,0,0,10,0,0,0,,,,2014-08-16 16:00,2014-08-17 16:00,,2014-06-12 07:00,2014-06-12 17:00,2014-06-12 07:00,2014-06-12 17:00,2014-06-12 07:00,2014-06-12 17:00,2014-08-16 16:00,2014-08-17 16:00,,PT_Normal,,,,,b8qZYFlTTBWlF5J7zl1V8A,EqwopKted0GNF+1fvK/AJA,,,N,0,0,,,2014-02-17 15:27,2014-03-01 17:06,admin,admin,
33,127676,6764,35211,6640,0,N,N,N,CP_Drtn,TT_Task,DT_FixedDrtn,TK_NotStart,HHI.1404,Erect & Tack Shell Course # 7 & Install Stagging Brackets,,450,0,20,0,420,420,20,32,0,32,,,,2014-08-03 16:00,2014-08-05 16:00,,2014-05-29 07:00,2014-05-31 17:00,2014-05-29 07:00,2014-05-31 17:00,2014-05-29 07:00,2014-05-31 17:00,2014-08-03 16:00,2014-08-05 16:00,,PT_Normal,,,,,iFKAEfHDQD2Mxk3eOOZmQw,LlFnB+sYTcekC7FnvJWU+Q,,,N,0,0,,,2014-02-17 15:27,2014-03-01 17:06,admin,admin,
34,127677,6764,35211,6640,0,N,N,N,CP_Drtn,TT_Task,DT_FixedDrtn,TK_NotStart,HHI.1405,Weld Outer Vertical Seam /Install the Stairways support on Shell,,450,0,10,0,170.666666,170.666666,10,42.666666,0,42.666666,,,,2014-08-04 16:00,2014-08-05 16:00,,2014-05-31 07:00,2014-05-31 17:00,2014-05-31 07:00,2014-05-31 17:00,2014-05-31 07:00,2014-05-31 17:00,2014-08-04 16:00,2014-08-05 16:00,,PT_Normal,,,,,mcxGk817SS6qxmEkmkrFvA,KAL0knLPRJO5hTW3rF0OUw,,,N,0,0,,,2014-02-17 15:27,2014-03-01 17:06,admin,admin,
35,127678,6764,35211,6640,0,N,N,N,CP_Drtn,TT_Task,DT_FixedDrtn,TK_NotStart,HHI.1406,Backgouge & NDT Inside Vertical Seam,,450,0,10,0,90.666666,90.666666,10,42.666666,0,42.666666,,,,2014-08-04 16:00,2014-08-05 16:00,,2014-05-31 07:00,2014-05-31 17:00,2014-05-31 07:00,2014-05-31 17:00,2014-05-31 07:00,2014-05-31 17:00,2014-08-04 16:00,2014-08-05 16:00,,PT_Normal,,,,,NJykRBQNRmiiGwRqh7/OyQ,PBQyarmoSIG4x4uJ6TMoyQ,,,N,0,0,,,2014-02-17 15:27,2014-03-01 17:06,admin,admin,
36,127679,6764,35211,6640,0,N,N,N,CP_Drtn,TT_Task,DT_FixedDrtn,TK_NotStart,HHI.1407,Weld Inside Vertical Seam,,450,0,10,0,170.666666,170.666666,10,42.666666,0,42.666666,,,,2014-08-05 16:00,2014-08-06 16:00,,2014-06-01 07:00,2014-06-01 17:00,2014-06-01 07:00,2014-06-01 17:00,2014-06-01 07:00,2014-06-01 17:00,2014-08-05 16:00,2014-08-06 16:00,,PT_Normal,,,,,NZIZXiTLRY+HRqC0ejY1OQ,LdZvuS7oTxWHFJM0s8kujQ,,,N,0,0,,,2014-02-17 15:27,2014-03-01 17:06,admin,admin,
37,127680,6764,35211,6640,0,N,N,N,CP_Drtn,TT_Task,DT_FixedDrtn,TK_NotStart,HHI.1408,"""""Weld Outer Horizontal Seam between Shell Course # 6 & 7""""",,450,0,10,0,167.111111,167.111111,10,33.066667,0,33.066667,,,,2014-08-06 16:00,2014-08-07 16:00,,2014-06-02 07:00,2014-06-02 17:00,2014-06-02 07:00,2014-06-02 17:00,2014-06-02 07:00,2014-06-02 17:00,2014-08-06 16:00,2014-08-07 16:00,,PT_Normal,,,,,CbL5dPSySFK5PXEQJs8KJQ,oBlQsFKSSDehNLYdujYFiQ,,,N,0,0,,,2014-02-17 15:27,2014-03-01 17:06,admin,admin,
38,127681,6764,35211,6640,0,N,N,N,CP_Drtn,TT_Task,DT_FixedDrtn,TK_NotStart,HHI.1410,"Weld Inner Horizontal Seam between Shell Course # 6 & 7""""",,450,0,10,0,188.444444,188.444444,10,33.066667,0,33.066667,,,,2014-08-09 11:00,2014-08-10 11:00,,2014-06-04 07:00,2014-06-04 17:00,2014-06-04 07:00,2014-06-04 17:00,2014-06-04 07:00,2014-06-04 17:00,2014-08-09 11:00,2014-08-10 11:00,,PT_Normal,,,,,zJpzGO3lTDiF3947xZEGrg,+SZCB1ijS7CySzEhmpcZIg,,,N,0,0,,,2014-02-17 15:27,2014-03-01 17:06,admin,admin,
39,127682,6764,35211,6640,0,N,N,N,CP_Drtn,TT_Task,DT_FixedDrtn,TK_NotStart,HHI.1412,Quailty Check(Visual Inspection & PT& Air Leak Test for Shell Nozzle & Pad),,450,0,60,0,55.555555,55.555555,60,33.066667,0,33.066667,,,,2014-08-03 16:00,2014-08-10 11:00,,2014-05-29 07:00,2014-06-04 17:00,2014-05-29 07:00,2014-06-04 17:00,2014-05-29 07:00,2014-06-04 17:00,2014-08-03 16:00,2014-08-10 11:00,,PT_Normal,,,,,hyWZRmzuSUubBkpi3Yk81g,HEaIPPqZRMWU7FdiujvhHg,,,N,0,0,,,2014-02-17 15:27,2014-03-01 17:06,admin,admin,
40,127683,6764,35211,6640,0,N,N,N,CP_Drtn,TT_Task,DT_FixedDrtn,TK_NotStart,HHI.1409,"""""Backgouge & NDT Inside Horizontal Seam between Shell Course# 6 & 7""""",,450,0,10,0,111.999998,111.999998,10,42.666667,0,42.666667,,,,2014-08-07 16:00,2014-08-09 11:00,,2014-06-03 07:00,2014-06-03 17:00,2014-06-03 07:00,2014-06-03 17:00,2014-06-03 07:00,2014-06-03 17:00,2014-08-07 16:00,2014-08-09 11:00,,PT_Normal,,,,,RnlUhO+gTWK6fvwZnwEkHA,UKLukVBPTkCGRZbPmdSGsQ,,,N,0,0,,,2014-02-17 15:27,2014-03-01 17:06,admin,admin,
41,127684,6764,35211,6640,0,N,N,N,CP_Drtn,TT_Task,DT_FixedDrtn,TK_NotStart,HHI.1411,"Fit,Weld Nozzle on Shell",,450,0,10,0,0,0,10,0,0,0,,,,2014-08-09 11:00,2014-08-10 11:00,,2014-06-04 07:00,2014-06-04 17:00,2014-06-04 07:00,2014-06-04 17:00,2014-06-04 07:00,2014-06-04 17:00,2014-08-09 11:00,2014-08-10 11:00,,PT_Normal,,,,,ENNVh5/mTS+xFTZHH3qNmA,,,,N,0,0,,,2014-02-17 15:27,2014-03-01 17:06,admin,admin,
42,127685,6764,35213,6640,0,N,N,N,CP_Drtn,TT_Task,DT_FixedDrtn,TK_NotStart,HHI.1280,"Quailty Check (Visual Inspection,PT & Vaccum Box Test)",,450,0,20,0,40,40,20,40,0,40,,,,2014-04-03 07:00,2014-04-05 17:00,,2014-02-10 07:00,2014-02-11 17:00,2014-02-10 07:00,2014-02-11 17:00,2014-02-10 07:00,2014-02-11 17:00,2014-04-03 07:00,2014-04-05 17:00,,PT_Normal,,,,,/aPwTLMATOeoU5ts/S8VQw,Cj0h9st1Que0naEhGC31Bg,,,N,0,0,,,2014-02-17 15:27,2014-03-01 17:06,admin,admin,
43,127686,6764,35213,6640,0,N,N,N,CP_Drtn,TT_Task,DT_FixedDrtn,TK_NotStart,HHI.1278,"Install Sealent,Erect & Tack of Annular Plates",,450,0,10,0,80,80,10,8,0,8,,,,2014-04-03 07:00,2014-04-03 17:00,,2014-02-10 07:00,2014-02-10 17:00,2014-02-10 07:00,2014-02-10 17:00,2014-02-10 07:00,2014-02-10 17:00,2014-04-03 07:00,2014-04-03 17:00,,PT_Normal,,,,,C7vp04fgS8OQK2T0/rXUgA,097QdWX0SSCLEWFVz2DdGA,,,N,0,0,,,2014-02-17 15:27,2014-03-01 17:06,admin,admin,
44,127687,6764,35213,6640,0,N,N,N,CP_Drtn,TT_Task,DT_FixedDrtn,TK_NotStart,HHI.1279,Welding of Annular Plates,,450,0,10,0,180,180,10,40,0,40,,,,2014-04-05 07:00,2014-04-05 17:00,,2014-02-11 07:00,2014-02-11 17:00,2014-02-11 07:00,2014-02-11 17:00,2014-02-11 07:00,2014-02-11 17:00,2014-04-05 07:00,2014-04-05 17:00,,PT_Normal,,,,,A4xY0lcwTtWbXP32T1Za5w,oHh7lCJTS+iUEFSmdP+I4Q,,,N,0,0,,,2014-02-17 15:27,2014-03-01 17:06,admin,admin,
45,127688,6764,35214,6640,0,N,N,N,CP_Drtn,TT_Task,DT_FixedDrtn,TK_NotStart,HHI.1283,Fit/Tack Bottom Plates-Short Seams,,450,0,20,0,0,0,20,0,0,0,,,,2014-04-09 07:00,2014-04-10 17:00,,2014-02-16 07:00,2014-02-17 17:00,2014-02-16 07:00,2014-02-17 17:00,2014-02-16 07:00,2014-02-17 17:00,2014-04-09 07:00,2014-04-10 17:00,,PT_Normal,,,,,TfauRp5gSbOxyWsoaWJeHQ,uhkdYaWUx0+umBsFw9lChQ,,,N,0,0,,,2014-02-17 15:27,2014-03-01 17:06,admin,admin,
46,127689,6764,35214,6640,0,N,N,N,CP_Drtn,TT_Task,DT_FixedDrtn,TK_NotStart,HHI.1284,Weld Short Seams,,450,0,30,0,0,0,30,0,0,0,,,,2014-04-10 07:00,2014-04-13 17:00,,2014-02-17 07:00,2014-02-19 17:00,2014-02-17 07:00,2014-02-19 17:00,2014-02-17 07:00,2014-02-19 17:00,2014-04-10 07:00,2014-04-13 17:00,,PT_Normal,,,,,WNxzGGoYT3yQ9YwN+UMKoQ,+WnS43UkRUOt/DhBTcv3Hw,,,N,0,0,,,2014-02-17 15:27,2014-03-01 17:06,admin,admin,
47,127690,6764,35214,6640,0,N,N,N,CP_Drtn,TT_Task,DT_FixedDrtn,TK_NotStart,HHI.1285,Fit/Tack Bottom Plates-Long Seams,,450,0,20,0,0,0,20,0,0,0,,,,2014-04-14 07:00,2014-04-15 17:00,,2014-02-20 07:00,2014-02-22 17:00,2014-02-20 07:00,2014-02-22 17:00,2014-02-20 07:00,2014-02-22 17:00,2014-04-14 07:00,2014-04-15 17:00,,PT_Normal,,,,,6BRsl6jUSvuYmGxPqoOn2w,YK2VI0eP302gnVkOZh9TDA,,,N,0,0,,,2014-02-17 15:27,2014-03-01 17:06,admin,admin,
48,127691,6764,35214,6640,0,N,N,N,CP_Drtn,TT_Task,DT_FixedDrtn,TK_NotStart,HHI.1282,Prepare & Lay Down Bottom Plates,,450,0,20,0,347.999998,347.999998,20,25.6,0,25.6,,,,2014-04-06 07:00,2014-04-07 17:00,,2014-02-12 07:00,2014-02-13 17:00,2014-02-12 07:00,2014-02-13 17:00,2014-02-12 07:00,2014-02-13 17:00,2014-04-06 07:00,2014-04-07 17:00,,PT_Normal,,,,,0z6BZnrzR9qJBnioiFG9cg,cSuqDDb+QJmAnEmAz7DsJA,,,N,0,0,,,2014-02-17 15:27,2014-03-01 17:06,admin,admin,
49,127692,6764,35214,6640,0,N,N,N,CP_Drtn,TT_Task,DT_FixedDrtn,TK_NotStart,HHI.1289,Quailty Check (Visual Inspection& Vaccum Box Test),,450,0,150,0,21.333334,21.333334,150,42.666666,0,42.666666,,,,2014-04-06 07:00,2014-04-22 17:00,,2014-02-12 07:00,2014-03-01 17:00,2014-02-12 07:00,2014-03-01 17:00,2014-02-12 07:00,2014-03-01 17:00,2014-04-06 07:00,2014-04-22 17:00,,PT_Normal,,,,,S0KltSpjRbuaMHiV9aSwkA,XZOJUaRwRAK6ogOg9ogpWA,,,N,0,0,,,2014-02-17 15:27,2014-03-01 17:06,admin,admin,
50,127693,6764,35214,6640,0,N,N,N,CP_Drtn,TT_Task,DT_FixedDrtn,TK_NotStart,HHI.1286,"Erect,Fitup of Sump",,500,50,10,0,51.999998,51.999998,10,42.666666,0,42.666666,,,,2014-04-21 07:00,2014-04-21 17:00,,2014-02-22 07:00,2014-02-22 17:00,2014-02-22 07:00,2014-02-22 17:00,2014-02-22 07:00,2014-02-22 17:00,2014-04-21 07:00,2014-04-21 17:00,,PT_Normal,,,,,U8e9dzCJReKyyCQopLy9aA,azLvu2U/T7yLYVzFoh2CDg,,,N,0,0,,,2014-02-17 15:27,2014-03-01 17:06,admin,admin,
51,127694,6764,35214,6640,0,N,N,N,CP_Drtn,TT_Task,DT_FixedDrtn,TK_NotStart,HHI.1288,Weld Sump,,450,0,10,0,17.066666,17.066666,10,42.666666,0,42.666666,,,,2014-04-22 07:00,2014-04-22 17:00,,2014-03-01 07:00,2014-03-01 17:00,2014-03-01 07:00,2014-03-01 17:00,2014-03-01 07:00,2014-03-01 17:00,2014-04-22 07:00,2014-04-22 17:00,,PT_Normal,,,,,7T3b6H0yTrqHBj5UWxMj9g,SqxN3XVPRMGrmG0HRhHfKQ,,,N,0,0,,,2014-02-17 15:27,2014-03-01 17:06,admin,admin,
52,127695,6764,35214,6640,0,N,N,N,CP_Drtn,TT_Task,DT_FixedDrtn,TK_NotStart,HHI.1287,Weld Long Seams,,450,0,70,0,0,0,70,0,0,0,,,,2014-04-15 07:00,2014-04-22 17:00,,2014-02-22 07:00,2014-03-01 17:00,2014-02-22 07:00,2014-03-01 17:00,2014-02-22 07:00,2014-03-01 17:00,2014-04-15 07:00,2014-04-22 17:00,,PT_Normal,,,,,O2Fnh5GGTg+/c97CeHYrtw,AsgK1LnCDEKHVNCBxqz+EA,,,N,0,0,,,2014-02-17 15:27,2014-03-01 17:06,admin,admin,
53,127696,6764,35215,6640,0,N,N,N,CP_Drtn,TT_Task,DT_FixedDrtn,TK_NotStart,HHI.1281,Perform RT for Tank#1 & #2,,450,0,10,0,0,0,10,0,0,0,,,,2014-04-06 07:00,2014-04-06 17:00,,2014-02-12 07:00,2014-02-12 17:00,2014-02-12 07:00,2014-02-12 17:00,2014-02-12 07:00,2014-02-12 17:00,2014-04-06 07:00,2014-04-06 17:00,,PT_Normal,,,,,gZNID4fgRHatlsUO0bnibg,,,,N,0,0,,,2014-02-17 15:27,2014-03-01 17:06,admin,admin,
54,127697,6764,35217,6640,0,N,N,N,CP_Drtn,TT_Task,DT_FixedDrtn,TK_NotStart,HHI.1441,Erect & Install Stairways & Platforms for Shell,,450,0,20,0,341.333337,341.333337,20,17.066667,0,17.066667,,,,2014-09-06 11:00,2014-09-08 11:00,,2014-07-09 09:00,2014-07-13 11:00,2014-07-09 09:00,2014-07-13 11:00,2014-07-09 09:00,2014-07-13 11:00,2014-09-06 11:00,2014-09-08 11:00,,PT_Normal,,,,,TolVflS5RCutTbp1cUYOJg,3sjD5nnoSZmvKuIzuIduyw,,,N,0,0,,,2014-02-17 15:27,2014-03-01 17:06,admin,admin,
55,127698,6764,35217,6640,0,N,N,N,CP_Drtn,TT_Task,DT_FixedDrtn,TK_NotStart,HHI.1442,Erect & Install Stairways & Platforms & Handrails for Roof,,450,0,20,0,341.333337,341.333337,20,17.066667,0,17.066667,,,,2014-09-08 11:00,2014-09-10 11:00,,2014-07-13 11:00,2014-07-16 13:00,2014-07-13 11:00,2014-07-16 13:00,2014-07-13 11:00,2014-07-16 13:00,2014-09-08 11:00,2014-09-10 11:00,,PT_Normal,,,,,dVl/n5KMSJuc554bj2UsHg,2JyTtz5lRd6WoHA+Zm5UkQ,,,N,0,0,,,2014-02-17 15:27,2014-03-01 17:06,admin,admin,
56,127699,6764,35217,6640,0,N,N,N,CP_Drtn,TT_Task,DT_FixedDrtn,TK_NotStart,HHI.1443,Quality Check,,450,0,10,0,0,0,10,0,0,0,,,,2014-09-08 11:00,2014-09-09 11:00,,2014-07-13 11:00,2014-07-14 15:00,2014-07-13 11:00,2014-07-14 15:00,2014-07-13 11:00,2014-07-14 15:00,2014-09-08 11:00,2014-09-09 11:00,,PT_Normal,,,,,2N5hDjGQQJ63CZzDRCAi7Q,,,,N,0,0,,,2014-02-17 15:27,2014-03-01 17:06,admin,admin,
57,127700,6764,35218,6640,0,N,N,N,CP_Drtn,TT_Task,DT_FixedDrtn,TK_NotStart,HHI.1431,"Erect,Lay Down & Install the Rafters (170 Rafters)/Install Internal Piping Brackets/Piping",,450,0,80,0,1343.999994,1343.999994,80,17.066666,0,17.066666,,,,2014-08-19 16:00,2014-08-28 11:00,,2014-06-16 07:00,2014-06-24 17:00,2014-06-16 07:00,2014-06-24 17:00,2014-06-16 07:00,2014-06-24 17:00,2014-08-19 16:00,2014-08-28 11:00,,PT_Normal,,,,,euRQr+3wTYmwzwDJG+2JtQ,THSHegV9zki4UJbwBanH/w,,,N,0,0,,,2014-02-17 15:27,2014-03-01 17:06,admin,admin,
58,127701,6764,35219,6640,0,N,N,N,CP_Drtn,TT_Task,DT_FixedDrtn,TK_NotStart,HHI.1423,"Fit & Tack 
Shell Course # 7 & Top Curb Angle",,450,0,20,0,255.999999,255.999999,20,8.533333,0,8.533333,,,,2014-08-16 16:00,2014-08-18 16:00,,2014-06-12 07:00,2014-06-14 17:00,2014-06-12 07:00,2014-06-14 17:00,2014-06-12 07:00,2014-06-14 17:00,2014-08-16 16:00,2014-08-18 16:00,,PT_Normal,,,,,Qf9z7DgITVWshWadYo+MEw,WgNR0A6wT0yU49nkkbSCBQ,,,N,0,0,,,2014-02-17 15:27,2014-03-01 17:06,admin,admin,
59,127702,6764,35219,6640,0,N,N,N,CP_Drtn,TT_Task,DT_FixedDrtn,TK_NotStart,HHI.1424,Weld Outer Horizontal Seam between Shell Course # 7 & Top Curb Angle,,460,0,10,0,128,128,10,33.066667,0,33.066667,,,,2014-08-19 16:00,2014-08-20 16:00,,2014-06-15 07:00,2014-06-15 17:00,2014-06-15 07:00,2014-06-15 17:00,2014-06-15 07:00,2014-06-15 17:00,2014-08-19 16:00,2014-08-20 16:00,,PT_Normal,,,,,LAiF9HSyQFm89s1WnUu2sw,Ga3mYA/Hu0GHWc/+xuLfng,,,N,0,0,,,2014-02-17 15:27,2014-03-01 17:06,admin,admin,
60,127703,6764,35219,6640,0,N,N,N,CP_Drtn,TT_Task,DT_FixedDrtn,TK_NotStart,HHI.1425,Backgouge & NDT Inside Horizontal Seam between Shell Course# 7 & Top Curb Angle,,460,10,10,0,90,90,10,33.066667,0,33.066667,,,,2014-08-19 16:00,2014-08-20 16:00,,2014-06-15 07:00,2014-06-15 17:00,2014-06-15 07:00,2014-06-15 17:00,2014-06-15 07:00,2014-06-15 17:00,2014-08-19 16:00,2014-08-20 16:00,,PT_Normal,,,,,GjqEwsj8TsGKuUry04tvmA,XfEkhc3qzUOwu7npi187aw,,,N,0,0,,,2014-02-17 15:27,2014-03-01 17:06,admin,admin,
61,127704,6764,35219,6640,0,N,N,N,CP_Drtn,TT_Task,DT_FixedDrtn,TK_NotStart,HHI.1427,Weld Inner Horizontal Seam between Shell Course # 7 & Top Curb Angle,,450,0,10,0,191.333334,191.333334,10,33.066667,0,33.066667,,,,2014-08-20 16:00,2014-08-21 16:00,,2014-06-17 07:00,2014-06-17 17:00,2014-06-17 07:00,2014-06-17 17:00,2014-06-17 07:00,2014-06-17 17:00,2014-08-20 16:00,2014-08-21 16:00,,PT_Normal,,,,,PG+g9PzpTw+8xLPB06KllA,yaclajItm06nnMuZp+/XWQ,,,N,0,0,,,2014-02-17 15:27,2014-03-01 17:06,admin,admin,
62,127705,6764,35219,6640,0,N,N,N,CP_Drtn,TT_Task,DT_FixedDrtn,TK_NotStart,HHI.1429,Quailty Check (Visual Inspection),,450,0,50,0,42.666664,42.666664,50,42.666667,0,42.666667,,,,2014-08-16 16:00,2014-08-21 16:00,,2014-06-12 07:00,2014-06-17 17:00,2014-06-12 07:00,2014-06-17 17:00,2014-06-12 07:00,2014-06-17 17:00,2014-08-16 16:00,2014-08-21 16:00,,PT_Normal,,,,,MQw4jH28Rn2ZpsI18Q4Oyg,Votkl/0mf0q/Xwp3DlYYRA,,,N,0,0,,,2014-02-17 15:27,2014-03-01 17:06,admin,admin,
63,127706,6764,35219,6640,0,N,N,N,CP_Drtn,TT_Task,DT_FixedDrtn,TK_NotStart,HHI.1426,"Fit up,Tack of Gusset Plates to Shell",,450,0,20,0,341.333337,341.333337,20,17.066667,0,17.066667,,,,2014-08-18 16:00,2014-08-20 16:00,,2014-06-15 07:00,2014-06-16 17:00,2014-06-15 07:00,2014-06-16 17:00,2014-06-15 07:00,2014-06-16 17:00,2014-08-18 16:00,2014-08-20 16:00,,PT_Normal,,,,,4qiCy5uBSP+4fuWDdTcNyw,qKqtJWqv40C4XPuXCBlFdQ,,,N,0,0,,,2014-02-17 15:27,2014-03-01 17:06,admin,admin,
64,127707,6764,35219,6640,0,N,N,N,CP_Drtn,TT_Task,DT_FixedDrtn,TK_NotStart,HHI.1428,Welding of Gusset Plates,,450,0,10,0,202.666668,202.666668,10,85.333333,0,85.333333,,,,2014-08-20 16:00,2014-08-21 16:00,,2014-06-17 07:00,2014-06-17 17:00,2014-06-17 07:00,2014-06-17 17:00,2014-06-17 07:00,2014-06-17 17:00,2014-08-20 16:00,2014-08-21 16:00,,PT_Normal,,,,,oCG34o0xQnuwCw9aOC4KRQ,jKE1tqqZDkGuRH9ov5owxw,,,N,0,0,,,2014-02-17 15:27,2014-03-01 17:06,admin,admin,
65,127708,6764,35220,6640,0,N,N,N,CP_Drtn,TT_Task,DT_FixedDrtn,TK_NotStart,HHI.1432,Prepare/Lay Down Roof Plates (80 Plates),,450,0,60,0,864.000004,864.000004,60,17.066667,0,17.066667,,,,2014-08-23 11:00,2014-08-29 13:30,,2014-06-19 07:00,2014-06-25 17:00,2014-06-19 07:00,2014-06-25 17:00,2014-06-19 07:00,2014-06-25 17:00,2014-08-23 11:00,2014-08-29 13:30,,PT_Normal,,,,,emG6/JeLT2uAmbn1vJHpsw,UwRnchSGxk6LzdhWgLw1qw,,,N,0,0,,,2014-02-17 15:27,2014-03-01 17:06,admin,admin,
66,127709,6764,35220,6640,0,N,N,N,CP_Drtn,TT_Task,DT_FixedDrtn,TK_NotStart,HHI.1433,Tacking of Roof Plates,,450,0,60,0,968,968,60,0,0,0,,,,2014-08-23 11:00,2014-08-29 13:30,,2014-06-19 07:00,2014-06-25 17:00,2014-06-19 07:00,2014-06-25 17:00,2014-06-19 07:00,2014-06-25 17:00,2014-08-23 11:00,2014-08-29 13:30,,PT_Normal,,,,,rh7IAwc3T/i/wGoj8r+7Ew,gQ64PyO/006RhDA9G3ApVA,,,N,0,0,,,2014-02-17 15:27,2014-03-01 17:06,admin,admin,
67,127710,6764,35220,6640,0,N,N,N,CP_Drtn,TT_Task,DT_FixedDrtn,TK_NotStart,HHI.1434,Welding of Roof Plates (Short Seams),,450,0,20,0,544,544,20,128,0,128,,,,2014-08-25 11:00,2014-08-27 11:00,,2014-06-22 07:00,2014-06-23 17:00,2014-06-22 07:00,2014-06-23 17:00,2014-06-22 07:00,2014-06-23 17:00,2014-08-25 11:00,2014-08-27 11:00,,PT_Normal,,,,,u0YPThC5ScWQZ0gSZNJdKw,wctmTeDhj0eZtvG1oplrSg,,,N,0,0,,,2014-02-17 15:27,2014-03-01 17:06,admin,admin,
68,127711,6764,35220,6640,0,N,N,N,CP_Drtn,TT_Task,DT_FixedDrtn,TK_NotStart,HHI.1435,Welding of Roof Plates (Long Seams),,450,0,50,0,1728.000001,1728.000001,50,249.6,0,249.6,,,,2014-08-27 11:00,2014-09-01 16:00,,2014-06-24 07:00,2014-07-01 11:00,2014-06-24 07:00,2014-07-01 11:00,2014-06-24 07:00,2014-07-01 11:00,2014-08-27 11:00,2014-09-01 16:00,,PT_Normal,,,,,ro2Z0ra3RhiN4H/BJE1YpA,JYjrEEAtAkWpQJGOKQ5i1g,,,N,0,0,,,2014-02-17 15:27,2014-03-01 17:06,admin,admin,
69,127712,6764,35220,6640,0,N,N,N,CP_Drtn,TT_Task,DT_FixedDrtn,TK_NotStart,HHI.1436,Tack of Roof Plates to Curb Angle,,460,10,20,0,416,416,20,0,0,0,,,,2014-08-30 16:00,2014-09-01 16:00,,2014-06-26 07:00,2014-06-29 13:00,2014-06-26 07:00,2014-06-29 13:00,2014-06-26 07:00,2014-06-29 13:00,2014-08-30 16:00,2014-09-01 16:00,,PT_Normal,,,,,sNqqGLWdQvey0Y9dG8jo5Q,adc4rGO0akSNOIFtJ1ipew,,,N,0,0,,,2014-02-17 15:27,2014-03-01 17:06,admin,admin,
70,127713,6764,35220,6640,0,N,N,N,CP_Drtn,TT_Task,DT_FixedDrtn,TK_NotStart,HHI.1437,Welding of Roof Plates to Curb Angle,,450,0,20,0,608.000003,608.000003,20,85.333333,0,85.333333,,,,2014-09-01 16:00,2014-09-03 16:00,,2014-07-01 11:00,2014-07-05 13:00,2014-07-01 11:00,2014-07-05 13:00,2014-07-01 11:00,2014-07-05 13:00,2014-09-01 16:00,2014-09-03 16:00,,PT_Normal,,,,,W4xeo1XQSBKd+BICxC4RrQ,LvTc0M252UyaOzpsVtpW2g,,,N,0,0,,,2014-02-17 15:27,2014-03-01 17:06,admin,admin,
71,127714,6764,35220,6640,0,N,N,N,CP_Drtn,TT_Task,DT_FixedDrtn,TK_NotStart,HHI.1440,"Quailty Check (Visual Inspection& Vaccum Box Test,PT,Air Leak Test for Roof Manholes& Nozzles))",,450,0,130,0,27.111111,27.111111,130,33.066667,0,33.066667,,,,2014-08-23 11:00,2014-09-06 11:00,,2014-06-19 07:00,2014-07-08 15:00,2014-06-19 07:00,2014-07-08 15:00,2014-06-19 07:00,2014-07-08 15:00,2014-08-23 11:00,2014-09-06 11:00,,PT_Normal,,,,,fbO+c87lRgCu5nD11zHIMw,YjqvbI3HH0SzAhcX9iT22Q,,,N,0,0,,,2014-02-17 15:27,2014-03-01 17:06,admin,admin,
72,127715,6764,35220,6640,0,N,N,N,CP_Drtn,TT_Task,DT_FixedDrtn,TK_NotStart,HHI.1438,"Fit,Weld Manholes ,Nozzles on Roof /install Top Platform Supports on Roof",,450,0,20,0,0,0,20,0,0,0,,,,2014-09-03 16:00,2014-09-06 11:00,,2014-07-05 13:00,2014-07-08 15:00,2014-07-05 13:00,2014-07-08 15:00,2014-07-05 13:00,2014-07-08 15:00,2014-09-03 16:00,2014-09-06 11:00,,PT_Normal,,,,,oVoDqnVlQZaQJXf6dqzmLw,,,,N,0,0,,,2014-02-17 15:27,2014-03-01 17:06,admin,admin,
73,127716,6764,35220,6640,0,N,N,N,CP_Drtn,TT_Task,DT_FixedDrtn,TK_NotStart,HHI.1439,Weld Internal Piping to Nozzle N1,,450,0,10,0,0,0,10,0,0,0,,,,2014-09-04 16:00,2014-09-06 11:00,,2014-07-07 11:00,2014-07-08 15:00,2014-07-07 11:00,2014-07-08 15:00,2014-07-07 11:00,2014-07-08 15:00,2014-09-04 16:00,2014-09-06 11:00,,PT_Normal,,,,,YMmfKpleSvOOfBa6wSQKqw,,,,N,0,0,,,2014-02-17 15:27,2014-03-01 17:06,admin,admin,
74,127717,6764,35221,6640,0,N,N,N,CP_Drtn,TT_Task,DT_FixedDrtn,TK_NotStart,HHI.1430,"Erect,Laydown & install Girders to Columns (2 Layers ,15 Girders)",,450,0,20,0,341.333331,341.333331,20,17.066666,0,17.066666,,,,2014-08-18 16:00,2014-08-20 16:00,,2014-06-15 07:00,2014-06-16 17:00,2014-06-15 07:00,2014-06-16 17:00,2014-06-15 07:00,2014-06-16 17:00,2014-08-18 16:00,2014-08-20 16:00,,PT_Normal,,,,,HAY+seg7TsmK4ho8yP9SLA,1YJ+hnUN+EGwgZaVQfhHdw,,,N,0,0,,,2014-02-17 15:27,2014-03-01 17:06,admin,admin,
75,127718,6764,35223,6640,0,N,N,N,CP_Drtn,TT_Task,DT_FixedDrtn,TK_NotStart,HHI.1290,Erect & Tack Shell Course # 1 & Install Stagging Brackets,,450,0,20,0,420,420,20,48,0,48,,,,2014-04-23 07:00,2014-04-24 17:00,,2014-03-02 07:00,2014-03-03 17:00,2014-03-02 07:00,2014-03-03 17:00,2014-03-02 07:00,2014-03-03 17:00,2014-04-23 07:00,2014-04-24 17:00,,PT_Normal,,,,,4cP7o/OWSvWEbvFb5l++Ng,dph+kfLeSlKG8yPiEExM8w,,,N,0,0,,,2014-02-17 15:27,2014-03-01 17:06,admin,admin,
76,127719,6764,35223,6640,0,N,N,N,CP_Drtn,TT_Task,DT_FixedDrtn,TK_NotStart,HHI.1291,Weld Outer Vertical Seam / Install the Stairways support on Shell,,450,0,20,0,400,400,20,80,0,80,,,,2014-04-24 07:00,2014-04-26 17:00,,2014-03-03 07:00,2014-03-04 17:00,2014-03-03 07:00,2014-03-04 17:00,2014-03-03 07:00,2014-03-04 17:00,2014-04-24 07:00,2014-04-26 17:00,,PT_Normal,,,,,pg5J7rpvRuC1tmH4lyiSMw,txw9TX5lSqSQoqJyAw76fw,,,N,0,0,,,2014-02-17 15:27,2014-03-01 17:06,admin,admin,
77,127720,6764,35223,6640,0,N,N,N,CP_Drtn,TT_Task,DT_FixedDrtn,TK_NotStart,HHI.1293,"Backgouge,Grinding & NDT Inside Vertical Seam",,450,0,10,0,90,90,10,33.066667,0,33.066667,,,,2014-04-27 07:00,2014-04-27 17:00,,2014-03-05 07:00,2014-03-05 17:00,2014-03-05 07:00,2014-03-05 17:00,2014-03-05 07:00,2014-03-05 17:00,2014-04-27 07:00,2014-04-27 17:00,,PT_Normal,,,,,GRK5/5WZRgyNTmIDlgQWxQ,a0TjU+bsSi2IeVLRsRBs+Q,,,N,0,0,,,2014-02-17 15:27,2014-03-01 17:06,admin,admin,
78,127721,6764,35223,6640,0,N,N,N,CP_Drtn,TT_Task,DT_FixedDrtn,TK_NotStart,HHI.1296,"Quailty Check(Visual Inspection & PT,Air Leak Test for Shell Manholes& Nozzles)",,450,0,60,0,27.111111,27.111111,60,33.066667,0,33.066667,,,,2014-04-23 07:00,2014-04-29 17:00,,2014-03-02 07:00,2014-03-08 17:00,2014-03-02 07:00,2014-03-08 17:00,2014-03-02 07:00,2014-03-08 17:00,2014-04-23 07:00,2014-04-29 17:00,,PT_Normal,,,,,SlZHOVm0QG+fEbd9nPK94Q,xOTmhU+cQjqZJ8uZBDQt5g,,,N,0,0,,,2014-02-17 15:27,2014-03-01 17:06,admin,admin,
79,127722,6764,35223,6640,0,N,N,N,CP_Drtn,TT_Task,DT_FixedDrtn,TK_NotStart,HHI.1294,Weld Inside Vertical Seam,,450,0,10,0,181.333334,181.333334,10,85.333334,0,85.333334,,,,2014-04-28 07:00,2014-04-28 17:00,,2014-03-06 07:00,2014-03-06 17:00,2014-03-06 07:00,2014-03-06 17:00,2014-03-06 07:00,2014-03-06 17:00,2014-04-28 07:00,2014-04-28 17:00,,PT_Normal,,,,,tnhQwWmiTau+jkMWKUmGAA,RUAUI4iwTEid1eFvM96f4A,,,N,0,0,,,2014-02-17 15:27,2014-03-01 17:06,admin,admin,
80,127723,6764,35223,6640,0,N,N,N,CP_Drtn,TT_Task,DT_FixedDrtn,TK_NotStart,HHI.1292,Fit up/Tack Shell #1 to Annular Plate,,450,0,10,0,0,0,10,0,0,0,,,,2014-04-24 07:00,2014-04-24 17:00,,2014-03-03 07:00,2014-03-03 17:00,2014-03-03 07:00,2014-03-03 17:00,2014-03-03 07:00,2014-03-03 17:00,2014-04-24 07:00,2014-04-24 17:00,,PT_Normal,,,,,g/Dvo2lqRXuI8ytkXs5xTg,,,,N,0,0,,,2014-02-17 15:27,2014-03-01 17:06,admin,admin,
81,127724,6764,35223,6640,0,N,N,N,CP_Drtn,TT_Task,DT_FixedDrtn,TK_NotStart,HHI.1295,"Fit,Weld for Manhole ,Nozzles on Shell",,450,0,20,0,0,0,20,0,0,0,,,,2014-04-28 07:00,2014-04-29 17:00,,2014-03-06 07:00,2014-03-08 17:00,2014-03-06 07:00,2014-03-08 17:00,2014-03-06 07:00,2014-03-08 17:00,2014-04-28 07:00,2014-04-29 17:00,,PT_Normal,,,,,t9stgGBaRh+aWPuNcJpA8g,,,,N,0,0,,,2014-02-17 15:27,2014-03-01 17:06,admin,admin,
82,127725,6764,35224,6640,0,N,N,N,CP_Drtn,TT_Task,DT_FixedDrtn,TK_NotStart,HHI.1297,Erect & Tack Shell Course # 1 &Install Stagging Brackets,,450,0,20,0,420,420,20,48,0,48,,,,2014-04-26 07:00,2014-04-27 17:00,,2014-03-04 07:00,2014-03-05 17:00,2014-03-04 07:00,2014-03-05 17:00,2014-03-04 07:00,2014-03-05 17:00,2014-04-26 07:00,2014-04-27 17:00,,PT_Normal,,,,,BMxT6TtpR0KkqJysQukoUQ,kHftJSfCTaiuW6yYVj5xIw,,,N,0,0,,,2014-02-17 15:27,2014-03-01 17:06,admin,admin,
83,127726,6764,35224,6640,0,N,N,N,CP_Drtn,TT_Task,DT_FixedDrtn,TK_NotStart,HHI.1298,Weld Outer Vertical Seam /Install the Stairways support on Shell,,450,0,20,0,290.133334,290.133334,20,85.333334,0,85.333334,,,,2014-04-27 07:00,2014-04-28 17:00,,2014-03-05 07:00,2014-03-06 17:00,2014-03-05 07:00,2014-03-06 17:00,2014-03-05 07:00,2014-03-06 17:00,2014-04-27 07:00,2014-04-28 17:00,,PT_Normal,,,,,2ZmOrjIAS8+ej5cx5IxfNw,XlhY8qmoS9CrJk+4AOejog,,,N,0,0,,,2014-02-17 15:27,2014-03-01 17:06,admin,admin,
84,127727,6764,35224,6640,0,N,N,N,CP_Drtn,TT_Task,DT_FixedDrtn,TK_NotStart,HHI.1300,"Backgouge,Grinding & NDT Inside Vertical Seam",,450,0,10,0,87.111111,87.111111,10,33.066667,0,33.066667,,,,2014-04-29 07:00,2014-04-29 17:00,,2014-03-08 07:00,2014-03-08 17:00,2014-03-08 07:00,2014-03-08 17:00,2014-03-08 07:00,2014-03-08 17:00,2014-04-29 07:00,2014-04-29 17:00,,PT_Normal,,,,,lZZbvbebRfSYd6UaF2FchA,izD41yRKTGS+/uADpTQffg,,,N,0,0,,,2014-02-17 15:27,2014-03-01 17:06,admin,admin,
85,127728,6764,35224,6640,0,N,N,N,CP_Drtn,TT_Task,DT_FixedDrtn,TK_NotStart,HHI.1301,Weld Inside Vertical Seam,,450,0,10,0,192.000001,192.000001,10,85.333334,0,85.333334,,,,2014-04-30 07:00,2014-04-30 17:00,,2014-03-09 07:00,2014-03-09 17:00,2014-03-09 07:00,2014-03-09 17:00,2014-03-09 07:00,2014-03-09 17:00,2014-04-30 07:00,2014-04-30 17:00,,PT_Normal,,,,,m+8LckRiSbK/IekazcmLDA,7ZVeY/g7S7u21f2yq9kicg,,,N,0,0,,,2014-02-17 15:27,2014-03-01 17:06,admin,admin,
86,127729,6764,35224,6640,0,N,N,N,CP_Drtn,TT_Task,DT_FixedDrtn,TK_NotStart,HHI.1303,"Quailty Check(Visual Inspection  PT,Air Leak Test for Shell Manholes& Nozzles)",,450,0,60,0,21.333333,21.333333,60,33.066667,0,33.066667,,,,2014-04-26 07:00,2014-05-01 17:00,,2014-03-04 07:00,2014-03-10 17:00,2014-03-04 07:00,2014-03-10 17:00,2014-03-04 07:00,2014-03-10 17:00,2014-04-26 07:00,2014-05-01 17:00,,PT_Normal,,,,,ipJffn/ZS3CikEL0OENNZw,Hlf1ioSmRpiJnyLtlqpeFg,,,N,0,0,,,2014-02-17 15:27,2014-03-01 17:06,admin,admin,
87,127730,6764,35224,6640,0,N,N,N,CP_Drtn,TT_Task,DT_FixedDrtn,TK_NotStart,HHI.1299,Fit up/Tack Shell #1 to Annular Plate,,450,0,10,0,0,0,10,0,0,0,,,,2014-04-27 07:00,2014-04-27 17:00,,2014-03-05 07:00,2014-03-05 17:00,2014-03-05 07:00,2014-03-05 17:00,2014-03-05 07:00,2014-03-05 17:00,2014-04-27 07:00,2014-04-27 17:00,,PT_Normal,,,,,bgauRCT8TYSA9xIxWeQi5g,,,,N,0,0,,,2014-02-17 15:27,2014-03-01 17:06,admin,admin,
88,127731,6764,35224,6640,0,N,N,N,CP_Drtn,TT_Task,DT_FixedDrtn,TK_NotStart,HHI.1302,"Fit,Weld for Manhole ,Nozzles on Shell",,450,0,20,0,0,0,20,0,0,0,,,,2014-04-30 07:00,2014-05-01 17:00,,2014-03-09 07:00,2014-03-10 17:00,2014-03-09 07:00,2014-03-10 17:00,2014-03-09 07:00,2014-03-10 17:00,2014-04-30 07:00,2014-05-01 17:00,,PT_Normal,,,,,jEKxvK1MRcW3MWs6JpKudQ,,,,N,0,0,,,2014-02-17 15:27,2014-03-01 17:06,admin,admin,
89,127732,6764,35225,6640,0,N,N,N,CP_Drtn,TT_Task,DT_FixedDrtn,TK_NotStart,HHI.1304,Perform RT for Tank#1 & #2,,450,0,10,0,0,0,10,0,0,0,,,,2014-05-03 07:00,2014-05-03 17:00,,2014-03-11 07:00,2014-03-11 17:00,2014-03-11 07:00,2014-03-11 17:00,2014-03-11 07:00,2014-03-11 17:00,2014-05-03 07:00,2014-05-03 17:00,,PT_Normal,,,,,kbT/6VIJS76IPsqXry51cA,,,,N,0,0,,,2014-02-17 15:27,2014-03-01 17:06,admin,admin,
90,127733,6764,35227,6640,0,N,N,N,CP_Drtn,TT_Task,DT_FixedDrtn,TK_NotStart,HHI.1353,Erect & Tack Shell Course # 4 & Install Stagging Brackets,,450,0,20,0,560,560,20,48,0,48,,,,2014-06-05 07:00,2014-06-07 17:00,,2014-04-14 07:00,2014-04-15 17:00,2014-04-14 07:00,2014-04-15 17:00,2014-04-14 07:00,2014-04-15 17:00,2014-06-05 07:00,2014-06-07 17:00,,PT_Normal,,,,,tf4L980AQSGO47dyLCHRMQ,MeOlOFPYSeiURgd4lRWNnw,,,N,0,0,,,2014-02-17 15:27,2014-03-01 17:06,admin,admin,
91,127734,6764,35227,6640,0,N,N,N,CP_Drtn,TT_Task,DT_FixedDrtn,TK_NotStart,HHI.1354,Weld Outer Vertical Seam /Install the Stairways support on Shell,,450,0,10,0,192.000001,192.000001,10,85.333334,0,85.333334,,,,2014-06-07 07:00,2014-06-07 17:00,,2014-04-15 07:00,2014-04-15 17:00,2014-04-15 07:00,2014-04-15 17:00,2014-04-15 07:00,2014-04-15 17:00,2014-06-07 07:00,2014-06-07 17:00,,PT_Normal,,,,,Jtt7g8pYSBmQZHEEg/88/w,jwfE+Mt3TRakFKU0Wam9kA,,,N,0,0,,,2014-02-17 15:27,2014-03-01 17:06,admin,admin,
92,127735,6764,35227,6640,0,N,N,N,CP_Drtn,TT_Task,DT_FixedDrtn,TK_NotStart,HHI.1355,Backgouge & NDT Inside Vertical Seam,,450,0,10,0,101.333333,101.333333,10,33.066667,0,33.066667,,,,2014-06-07 07:00,2014-06-07 17:00,,2014-04-15 07:00,2014-04-15 17:00,2014-04-15 07:00,2014-04-15 17:00,2014-04-15 07:00,2014-04-15 17:00,2014-06-07 07:00,2014-06-07 17:00,,PT_Normal,,,,,JUbpLeNTRa64A+MKzCv2ow,NylUyWoiR6+E15BkZlC+Bw,,,N,0,0,,,2014-02-17 15:27,2014-03-01 17:06,admin,admin,
93,127736,6764,35227,6640,0,N,N,N,CP_Drtn,TT_Task,DT_FixedDrtn,TK_NotStart,HHI.1356,Weld Inside Vertical Seam,,450,0,10,0,202.666668,202.666668,10,85.333333,0,85.333333,,,,2014-06-08 07:00,2014-06-08 17:00,,2014-04-16 07:00,2014-04-16 17:00,2014-04-16 07:00,2014-04-16 17:00,2014-04-16 07:00,2014-04-16 17:00,2014-06-08 07:00,2014-06-08 17:00,,PT_Normal,,,,,hiSgeKbzSLmCRobDZz3BNw,6+881kh5TgerxDrad2RzQg,,,N,0,0,,,2014-02-17 15:27,2014-03-01 17:06,admin,admin,
94,127737,6764,35227,6640,0,N,N,N,CP_Drtn,TT_Task,DT_FixedDrtn,TK_NotStart,HHI.1358,"Backgouge & NDT Inside Horizontal Seam between Shell Course# 3 & 4""""",,450,0,10,0,94.222222,94.222222,10,33.066667,0,33.066667,,,,2014-06-11 07:00,2014-06-11 17:00,,2014-04-20 07:00,2014-04-20 17:00,2014-04-20 07:00,2014-04-20 17:00,2014-04-20 07:00,2014-04-20 17:00,2014-06-11 07:00,2014-06-11 17:00,,PT_Normal,,,,,WfzBcSGyR4aqWrOGE76aHA,gYcj4lXvR+KQMsgBStkz8w,,,N,0,0,,,2014-02-17 15:27,2014-03-01 17:06,admin,admin,
95,127738,6764,35227,6640,0,N,N,N,CP_Drtn,TT_Task,DT_FixedDrtn,TK_NotStart,HHI.1359,"Weld Inner Horizontal Seam between Shell Course # 3 & 4""""",,450,0,10,0,405.333332,405.333332,10,128,0,128,,,,2014-06-12 07:00,2014-06-12 17:00,,2014-04-21 07:00,2014-04-21 17:00,2014-04-21 07:00,2014-04-21 17:00,2014-04-21 07:00,2014-04-21 17:00,2014-06-12 07:00,2014-06-12 17:00,,PT_Normal,,,,,T400Ffx9TBeOBOsTNYIuzg,iczYKgXwSb+xlCtZB3XHFg,,,N,0,0,,,2014-02-17 15:27,2014-03-01 17:06,admin,admin,
96,127739,6764,35227,6640,0,N,N,N,CP_Drtn,TT_Task,DT_FixedDrtn,TK_NotStart,HHI.1360,Quailty Check(Visual Inspection),,450,0,70,0,48.444444,48.444444,70,33.066667,0,33.066667,,,,2014-06-05 07:00,2014-06-12 17:00,,2014-04-14 07:00,2014-04-21 17:00,2014-04-14 07:00,2014-04-21 17:00,2014-04-14 07:00,2014-04-21 17:00,2014-06-05 07:00,2014-06-12 17:00,,PT_Normal,,,,,q2RcESckT3WqcWPJRGpfLQ,UydLAt2LRz6sGBSLU89xKQ,,,N,0,0,,,2014-02-17 15:27,2014-03-01 17:06,admin,admin,
97,127740,6764,35227,6640,0,N,N,N,CP_Drtn,TT_Task,DT_FixedDrtn,TK_NotStart,HHI.1357,"Weld Outer Horizontal Seam between Shell Course # 3 & 4""""",,450,0,20,0,405.333332,405.333332,20,128,0,128,,,,2014-06-09 07:00,2014-06-10 17:00,,2014-04-17 07:00,2014-04-19 17:00,2014-04-17 07:00,2014-04-19 17:00,2014-04-17 07:00,2014-04-19 17:00,2014-06-09 07:00,2014-06-10 17:00,,PT_Normal,,,,,2ffOFZgVTCO6/YM1Seov3g,C/NxYlZMQ16e/IuljFYlyQ,,,N,0,0,,,2014-02-17 15:27,2014-03-01 17:06,admin,admin,
98,127741,6764,35228,6640,0,N,N,N,CP_Drtn,TT_Task,DT_FixedDrtn,TK_NotStart,HHI.1361,Perform RT for Tank#1 & #2,,450,0,10,0,0,0,10,0,0,0,,,,2014-06-14 07:00,2014-06-14 17:00,,2014-04-22 07:00,2014-04-22 17:00,2014-04-22 07:00,2014-04-22 17:00,2014-04-22 07:00,2014-04-22 17:00,2014-06-14 07:00,2014-06-14 17:00,,PT_Normal,,,,,+kRWLK9sRkWq3xa3kYzpQg,aUP+CvH/Rk+3o/Lzz8hirw,,,N,0,0,,,2014-02-17 15:27,2014-03-01 17:06,admin,admin,
99,127742,6764,35229,6640,0,N,N,N,CP_Drtn,TT_Task,DT_FixedDrtn,TK_NotStart,HHI.1345,Erect & Tack Shell Course # 4 & Install Stagging Brackets,,450,0,20,0,480,480,20,48,0,48,,,,2014-06-03 07:00,2014-06-04 17:00,,2014-04-12 07:00,2014-04-13 17:00,2014-04-12 07:00,2014-04-13 17:00,2014-04-12 07:00,2014-04-13 17:00,2014-06-03 07:00,2014-06-04 17:00,,PT_Normal,,,,,+vT2tYcLTJucSNlniDSDvQ,ACHMBXqgR+mheP5wbvjRAA,,,N,0,0,,,2014-02-17 15:27,2014-03-01 17:06,admin,admin,
100,127743,6764,35229,6640,0,N,N,N,CP_Drtn,TT_Task,DT_FixedDrtn,TK_NotStart,HHI.1346,Weld Outer Vertical Seam /Install the Stairways support on Shell,,450,0,10,0,160,160,10,85.333334,0,85.333334,,,,2014-06-04 07:00,2014-06-04 17:00,,2014-04-13 07:00,2014-04-13 17:00,2014-04-13 07:00,2014-04-13 17:00,2014-04-13 07:00,2014-04-13 17:00,2014-06-04 07:00,2014-06-04 17:00,,PT_Normal,,,,,6fpbBfPORu669bkdt8J9hg,bQI2PjT/Qe6Uj/PlaH4fTw,,,N,0,0,,,2014-02-17 15:27,2014-03-01 17:06,admin,admin,
101,127744,6764,35229,6640,0,N,N,N,CP_Drtn,TT_Task,DT_FixedDrtn,TK_NotStart,HHI.1347,Backgouge & NDT Inside Vertical Seam,,450,0,10,0,80,80,10,33.066667,0,33.066667,,,,2014-06-04 07:00,2014-06-04 17:00,,2014-04-13 07:00,2014-04-13 17:00,2014-04-13 07:00,2014-04-13 17:00,2014-04-13 07:00,2014-04-13 17:00,2014-06-04 07:00,2014-06-04 17:00,,PT_Normal,,,,,222ZJF5XSEqehFiB/TncnQ,EfEbLlhjTqezakeopHISow,,,N,0,0,,,2014-02-17 15:27,2014-03-01 17:06,admin,admin,
102,127745,6764,35229,6640,0,N,N,N,CP_Drtn,TT_Task,DT_FixedDrtn,TK_NotStart,HHI.1348,Weld Inside Vertical Seam,,450,0,10,0,202.666668,202.666668,10,85.333333,0,85.333333,,,,2014-06-05 07:00,2014-06-05 17:00,,2014-04-14 07:00,2014-04-14 17:00,2014-04-14 07:00,2014-04-14 17:00,2014-04-14 07:00,2014-04-14 17:00,2014-06-05 07:00,2014-06-05 17:00,,PT_Normal,,,,,VLzQq2a3RLuXeBAEJHup1g,IZqWk6snTWGTPfgSkJn8cA,,,N,0,0,,,2014-02-17 15:27,2014-03-01 17:06,admin,admin,
103,127746,6764,35229,6640,0,N,N,N,CP_Drtn,TT_Task,DT_FixedDrtn,TK_NotStart,HHI.1349,"Weld Outer Horizontal Seam between Shell Course # 3 & 4""""",,450,0,20,0,388.266664,388.266664,20,72.96,0,72.96,,,,2014-06-07 07:00,2014-06-08 17:00,,2014-04-15 07:00,2014-04-16 17:00,2014-04-15 07:00,2014-04-16 17:00,2014-04-15 07:00,2014-04-16 17:00,2014-06-07 07:00,2014-06-08 17:00,,PT_Normal,,,,,XvRJa6LxTBGuXcB+ePjJDQ,NWO7EvrGRVSmlrex+St9iQ,,,N,0,0,,,2014-02-17 15:27,2014-03-01 17:06,admin,admin,
104,127747,6764,35229,6640,0,N,N,N,CP_Drtn,TT_Task,DT_FixedDrtn,TK_NotStart,HHI.1350,"Backgouge & NDT Inside Horizontal Seam between Shell Course# 3 & 4""""",,450,0,10,0,101.333333,101.333333,10,33.066667,0,33.066667,,,,2014-06-09 07:00,2014-06-09 17:00,,2014-04-17 07:00,2014-04-17 17:00,2014-04-17 07:00,2014-04-17 17:00,2014-04-17 07:00,2014-04-17 17:00,2014-06-09 07:00,2014-06-09 17:00,,PT_Normal,,,,,qjcbfmbhTxGJ0DYFb4d3Aw,QCQdQRkaTHGjx8jvjZdBfA,,,N,0,0,,,2014-02-17 15:27,2014-03-01 17:06,admin,admin,
105,127748,6764,35229,6640,0,N,N,N,CP_Drtn,TT_Task,DT_FixedDrtn,TK_NotStart,HHI.1351,"Weld Inner Horizontal Seam between Shell Course # 3 & 4""""",,450,0,10,0,388.266664,388.266664,10,72.96,0,72.96,,,,2014-06-10 07:00,2014-06-10 17:00,,2014-04-19 07:00,2014-04-19 17:00,2014-04-19 07:00,2014-04-19 17:00,2014-04-19 07:00,2014-04-19 17:00,2014-06-10 07:00,2014-06-10 17:00,,PT_Normal,,,,,YwEqJ6a4QsemgPm0q0d7yw,eSkDVKneQhepFA9Rl0I+QQ,,,N,0,0,,,2014-02-17 15:27,2014-03-01 17:06,admin,admin,
106,127749,6764,35229,6640,0,N,N,N,CP_Drtn,TT_Task,DT_FixedDrtn,TK_NotStart,HHI.1352,Quailty Check(Visual Inspection),,450,0,70,0,34.222222,34.222222,70,33.066667,0,33.066667,,,,2014-06-03 07:00,2014-06-10 17:00,,2014-04-12 07:00,2014-04-19 17:00,2014-04-12 07:00,2014-04-19 17:00,2014-04-12 07:00,2014-04-19 17:00,2014-06-03 07:00,2014-06-10 17:00,,PT_Normal,,,,,Y46yzsf1TwWeNd1k+YzOeg,5q4kVCTaRkysniARJbdJSQ,,,N,0,0,,,2014-02-17 15:27,2014-03-01 17:06,admin,admin,
107,127750,6764,35231,6640,0,N,N,N,CP_Drtn,TT_Task,DT_FixedDrtn,TK_NotStart,HHI.1392,Erect & Tack Shell Course # 6 & Install Stagging Brackets,,450,0,20,0,380,380,20,48,0,48,,,,2014-07-15 09:00,2014-07-19 11:00,,2014-05-17 07:00,2014-05-18 17:00,2014-05-17 07:00,2014-05-18 17:00,2014-05-17 07:00,2014-05-18 17:00,2014-07-15 09:00,2014-07-19 11:00,,PT_Normal,,,,,fA//mAkLR5mldrCzrD9w1Q,k21LxzkWQwG3mL1UyUlmow,,,N,0,0,,,2014-02-17 15:27,2014-03-01 17:06,admin,admin,
108,127751,6764,35231,6640,0,N,N,N,CP_Drtn,TT_Task,DT_FixedDrtn,TK_NotStart,HHI.1393,Weld Outer Vertical Seam,,450,0,10,0,160,160,10,42.666666,0,42.666666,,,,2014-07-16 13:00,2014-07-19 11:00,,2014-05-18 07:00,2014-05-18 17:00,2014-05-18 07:00,2014-05-18 17:00,2014-05-18 07:00,2014-05-18 17:00,2014-07-16 13:00,2014-07-19 11:00,,PT_Normal,,,,,UtnUBABTQdaVpn2w7O+sKg,pofYXxV3SjexU9vAy6wtGw,,,N,0,0,,,2014-02-17 15:27,2014-03-01 17:06,admin,admin,
109,127752,6764,35231,6640,0,N,N,N,CP_Drtn,TT_Task,DT_FixedDrtn,TK_NotStart,HHI.1394,Backgouge & NDT Inside Vertical Seam,,450,0,10,0,101.333332,101.333332,10,42.666666,0,42.666666,,,,2014-07-16 13:00,2014-07-19 11:00,,2014-05-18 07:00,2014-05-18 17:00,2014-05-18 07:00,2014-05-18 17:00,2014-05-18 07:00,2014-05-18 17:00,2014-07-16 13:00,2014-07-19 11:00,,PT_Normal,,,,,FnxATK6JRqeSshSnQCp5hQ,hrSDHfGCQjiyFvgX+YtgHA,,,N,0,0,,,2014-02-17 15:27,2014-03-01 17:06,admin,admin,
110,127753,6764,35231,6640,0,N,N,N,CP_Drtn,TT_Task,DT_FixedDrtn,TK_NotStart,HHI.1395,Weld Inside Vertical Seam,,450,0,10,0,160,160,10,42.666666,0,42.666666,,,,2014-07-19 11:00,2014-07-20 15:00,,2014-05-19 07:00,2014-05-19 17:00,2014-05-19 07:00,2014-05-19 17:00,2014-05-19 07:00,2014-05-19 17:00,2014-07-19 11:00,2014-07-20 15:00,,PT_Normal,,,,,enjGcz/6QK+iO74KBBjPHA,aOnFUpsfRLyR+4hltzh6/Q,,,N,0,0,,,2014-02-17 15:27,2014-03-01 17:06,admin,admin,
111,127754,6764,35231,6640,0,N,N,N,CP_Drtn,TT_Task,DT_FixedDrtn,TK_NotStart,HHI.1396,"""""Weld Outer Horizontal Seam between Shell Course # 5 & 6""""",,450,0,20,0,405.333336,405.333336,20,85.333333,0,85.333333,,,,2014-07-21 09:00,2014-07-24 11:00,,2014-05-20 07:00,2014-05-21 17:00,2014-05-20 07:00,2014-05-21 17:00,2014-05-20 07:00,2014-05-21 17:00,2014-07-21 09:00,2014-07-24 11:00,,PT_Normal,,,,,oByH8EmCRxa7K5g5JL6kpQ,m7mvituOQ4aJvh751qOZww,,,N,0,0,,,2014-02-17 15:27,2014-03-01 17:06,admin,admin,
112,127755,6764,35231,6640,0,N,N,N,CP_Drtn,TT_Task,DT_FixedDrtn,TK_NotStart,HHI.1397,"""""Backgouge & NDT Inside Horizontal Seam between Shell Course# 5 & 6""""",,450,0,10,0,108.444444,108.444444,10,33.066667,0,33.066667,,,,2014-07-24 11:00,2014-07-26 15:00,,2014-05-22 07:00,2014-05-22 17:00,2014-05-22 07:00,2014-05-22 17:00,2014-05-22 07:00,2014-05-22 17:00,2014-07-24 11:00,2014-07-26 15:00,,PT_Normal,,,,,fJUGgcTYQ9eRjsv3bL5oGA,4ZGfWOyHTzCNhToSEzKvuw,,,N,0,0,,,2014-02-17 15:27,2014-03-01 17:06,admin,admin,
113,127756,6764,35231,6640,0,N,N,N,CP_Drtn,TT_Task,DT_FixedDrtn,TK_NotStart,HHI.1398,"Weld Inner Horizontal Seam between Shell Course # 5 & 6""""",,450,0,10,0,202.666668,202.666668,10,85.333333,0,85.333333,,,,2014-07-27 09:00,2014-07-30 11:00,,2014-05-24 07:00,2014-05-24 17:00,2014-05-24 07:00,2014-05-24 17:00,2014-05-24 07:00,2014-05-24 17:00,2014-07-27 09:00,2014-07-30 11:00,,PT_Normal,,,,,mw+A55MMR56IaIPEYgB8Zg,fA7Xf4rrQvG2E2Hjpha8Rg,,,N,0,0,,,2014-02-17 15:27,2014-03-01 17:06,admin,admin,
114,127757,6764,35231,6640,0,N,N,N,CP_Drtn,TT_Task,DT_FixedDrtn,TK_NotStart,HHI.1399,Quailty Check(Visual Inspection),,450,0,70,0,27.111111,27.111111,70,33.066667,0,33.066667,,,,2014-07-15 09:00,2014-07-30 11:00,,2014-05-17 07:00,2014-05-24 17:00,2014-05-17 07:00,2014-05-24 17:00,2014-05-17 07:00,2014-05-24 17:00,2014-07-15 09:00,2014-07-30 11:00,,PT_Normal,,,,,E7rN/ZmVRVenfScyebMPoQ,6CDsLrXcRYeFLwBDNbzZcQ,,,N,0,0,,,2014-02-17 15:27,2014-03-01 17:06,admin,admin,
115,127758,6764,35232,6640,0,N,N,N,CP_Drtn,TT_Task,DT_FixedDrtn,TK_NotStart,HHI.1400,Erect & Tack Wind Girder,,450,0,10,0,262.666669,262.666669,10,11.377778,0,11.377778,,,,2014-07-30 11:00,2014-07-31 11:00,,2014-05-25 07:00,2014-05-25 17:00,2014-05-25 07:00,2014-05-25 17:00,2014-05-25 07:00,2014-05-25 17:00,2014-07-30 11:00,2014-07-31 11:00,,PT_Normal,,,,,TZzt51FgRNaDtLtrFnCWTQ,tMZtpSHbQAifP6LTfekxCw,,,N,0,0,,,2014-02-17 15:27,2014-03-01 17:06,admin,admin,
116,127759,6764,35232,6640,0,N,N,N,CP_Drtn,TT_Task,DT_FixedDrtn,TK_NotStart,HHI.1401,Weld Wind Girder,,450,0,30,0,576.000003,576.000003,30,85.333334,0,85.333334,,,,2014-07-31 11:00,2014-08-03 16:00,,2014-05-26 07:00,2014-05-28 17:00,2014-05-26 07:00,2014-05-28 17:00,2014-05-26 07:00,2014-05-28 17:00,2014-07-31 11:00,2014-08-03 16:00,,PT_Normal,,,,,/ecgjtGfQsqE8NhKQ8sG4g,xp0vm7vHTlCJEqO7VAe/5A,,,N,0,0,,,2014-02-17 15:27,2014-03-01 17:06,admin,admin,
117,127760,6764,35232,6640,0,N,N,N,CP_Drtn,TT_Task,DT_FixedDrtn,TK_NotStart,HHI.1402,Quailty Check(Visual Inspection & PT),,450,0,40,0,0,0,40,0,0,0,,,,2014-07-30 11:00,2014-08-03 16:00,,2014-05-25 07:00,2014-05-28 17:00,2014-05-25 07:00,2014-05-28 17:00,2014-05-25 07:00,2014-05-28 17:00,2014-07-30 11:00,2014-08-03 16:00,,PT_Normal,,,,,Yjv8eiKYS3KgaKyjD2fFzw,,,,N,0,0,,,2014-02-17 15:27,2014-03-01 17:06,admin,admin,
118,127761,6764,35233,6640,0,N,N,N,CP_Drtn,TT_Task,DT_FixedDrtn,TK_NotStart,HHI.1381,Erect & Tack Shell Course # 6 & Instal Stagging Brackets,,450,0,20,0,400,400,20,48,0,48,,,,2014-06-25 07:00,2014-06-26 17:00,,2014-05-04 07:00,2014-05-05 17:00,2014-05-04 07:00,2014-05-05 17:00,2014-05-04 07:00,2014-05-05 17:00,2014-06-25 07:00,2014-06-26 17:00,,PT_Normal,,,,,d0tTKx6sQkCK36tYtt7YLQ,Z7vRosz9RHKsQo8FrKiR3A,,,N,0,0,,,2014-02-17 15:27,2014-03-01 17:06,admin,admin,
119,127762,6764,35233,6640,0,N,N,N,CP_Drtn,TT_Task,DT_FixedDrtn,TK_NotStart,HHI.1382,Weld Outer Vertical Seam /Install the Stairways support on Shell,,450,0,10,0,181.333332,181.333332,10,42.666666,0,42.666666,,,,2014-06-26 07:00,2014-06-26 17:00,,2014-05-05 07:00,2014-05-05 17:00,2014-05-05 07:00,2014-05-05 17:00,2014-05-05 07:00,2014-05-05 17:00,2014-06-26 07:00,2014-06-26 17:00,,PT_Normal,,,,,yDakTNj0QEq8J7i3p1Uixw,gcsqm87QSF+X3wCUeZQ4Og,,,N,0,0,,,2014-02-17 15:27,2014-03-01 17:06,admin,admin,
120,127763,6764,35233,6640,0,N,N,N,CP_Drtn,TT_Task,DT_FixedDrtn,TK_NotStart,HHI.1383,Backgouge & NDT Inside Vertical Seam,,450,0,10,0,101.333332,101.333332,10,42.666666,0,42.666666,,,,2014-06-26 07:00,2014-06-26 17:00,,2014-05-05 07:00,2014-05-05 17:00,2014-05-05 07:00,2014-05-05 17:00,2014-05-05 07:00,2014-05-05 17:00,2014-06-26 07:00,2014-06-26 17:00,,PT_Normal,,,,,v5AOhzmlT9CGnLIO37q+zw,xXHPUcpxSGW/G/+ju5ThkQ,,,N,0,0,,,2014-02-17 15:27,2014-03-01 17:06,admin,admin,
121,127764,6764,35233,6640,0,N,N,N,CP_Drtn,TT_Task,DT_FixedDrtn,TK_NotStart,HHI.1384,Weld Inside Vertical Seam,,450,0,10,0,191.999998,191.999998,10,42.666666,0,42.666666,,,,2014-06-28 09:00,2014-06-29 13:00,,2014-05-06 07:00,2014-05-06 17:00,2014-05-06 07:00,2014-05-06 17:00,2014-05-06 07:00,2014-05-06 17:00,2014-06-28 09:00,2014-06-29 13:00,,PT_Normal,,,,,25fbm2N0S2eviF2MmdP7jw,hCas/G9sSHyaalclL3P0Eg,,,N,0,0,,,2014-02-17 15:27,2014-03-01 17:06,admin,admin,
122,127765,6764,35233,6640,0,N,N,N,CP_Drtn,TT_Task,DT_FixedDrtn,TK_NotStart,HHI.1385,"""""Weld Outer Horizontal Seam between Shell Course # 5 & 6""""",,450,0,20,0,405.333336,405.333336,20,85.333333,0,85.333333,,,,2014-06-29 13:00,2014-07-02 15:00,,2014-05-07 07:00,2014-05-08 17:00,2014-05-07 07:00,2014-05-08 17:00,2014-05-07 07:00,2014-05-08 17:00,2014-06-29 13:00,2014-07-02 15:00,,PT_Normal,,,,,mZak8QaXTX+9YJtd/fFkwQ,qaJOIHnlQ5qxlhS50iY0Vw,,,N,0,0,,,2014-02-17 15:27,2014-03-01 17:06,admin,admin,
123,127766,6764,35233,6640,0,N,N,N,CP_Drtn,TT_Task,DT_FixedDrtn,TK_NotStart,HHI.1386,"""""Backgouge & NDT Inside Horizontal Seam between Shell Course# 5 & 6""""",,450,0,10,0,108.444444,108.444444,10,33.066667,0,33.066667,,,,2014-07-03 09:00,2014-07-05 13:00,,2014-05-10 07:00,2014-05-10 17:00,2014-05-10 07:00,2014-05-10 17:00,2014-05-10 07:00,2014-05-10 17:00,2014-07-03 09:00,2014-07-05 13:00,,PT_Normal,,,,,BXMqFf12R12Lr9GgJu9qBA,p0beZp6LTf+DDxyLS3wvHg,,,N,0,0,,,2014-02-17 15:27,2014-03-01 17:06,admin,admin,
124,127767,6764,35233,6640,0,N,N,N,CP_Drtn,TT_Task,DT_FixedDrtn,TK_NotStart,HHI.1387,"Weld Inner Horizontal Seam between Shell Course # 5 & 6""""",,450,0,10,0,202.666668,202.666668,10,85.333333,0,85.333333,,,,2014-07-05 13:00,2014-07-07 11:00,,2014-05-11 07:00,2014-05-11 17:00,2014-05-11 07:00,2014-05-11 17:00,2014-05-11 07:00,2014-05-11 17:00,2014-07-05 13:00,2014-07-07 11:00,,PT_Normal,,,,,N9GqeFTSSiK8OhKBc3oNCg,KKSyhgtJThuUkPVdRA9saQ,,,N,0,0,,,2014-02-17 15:27,2014-03-01 17:06,admin,admin,
125,127768,6764,35233,6640,0,N,N,N,CP_Drtn,TT_Task,DT_FixedDrtn,TK_NotStart,HHI.1388,Quailty Check(Visual Inspection),,450,0,70,0,34.222222,34.222222,70,33.066667,0,33.066667,,,,2014-06-25 07:00,2014-07-07 11:00,,2014-05-04 07:00,2014-05-11 17:00,2014-05-04 07:00,2014-05-11 17:00,2014-05-04 07:00,2014-05-11 17:00,2014-06-25 07:00,2014-07-07 11:00,,PT_Normal,,,,,P5u7R9FkTDOLpiI+L8ibSw,/l5ntQ5qRUeVQgKWNHuvsA,,,N,0,0,,,2014-02-17 15:27,2014-03-01 17:06,admin,admin,
126,127769,6764,35234,6640,0,N,N,N,CP_Drtn,TT_Task,DT_FixedDrtn,TK_NotStart,HHI.1389,Erect & Tack Wind Girder,,450,0,10,0,276.888892,276.888892,10,11.377778,0,11.377778,,,,2014-07-07 11:00,2014-07-08 15:00,,2014-05-12 07:00,2014-05-12 17:00,2014-05-12 07:00,2014-05-12 17:00,2014-05-12 07:00,2014-05-12 17:00,2014-07-07 11:00,2014-07-08 15:00,,PT_Normal,,,,,+KvQa3PMSj2lOYzyLA0jIQ,KJBdyxy7Rd+5hzKKObu95w,,,N,0,0,,,2014-02-17 15:27,2014-03-01 17:06,admin,admin,
127,127770,6764,35234,6640,0,N,N,N,CP_Drtn,TT_Task,DT_FixedDrtn,TK_NotStart,HHI.1390,Weld Wind Girder,,450,0,30,0,608.000004,608.000004,30,85.333333,0,85.333333,,,,2014-07-09 09:00,2014-07-14 15:00,,2014-05-13 07:00,2014-05-15 17:00,2014-05-13 07:00,2014-05-15 17:00,2014-05-13 07:00,2014-05-15 17:00,2014-07-09 09:00,2014-07-14 15:00,,PT_Normal,,,,,dRdoqK4PSbiICJOjH3AKoQ,U5T47WE9Q46JS8OgXyuwsg,,,N,0,0,,,2014-02-17 15:27,2014-03-01 17:06,admin,admin,
128,127771,6764,35234,6640,0,N,N,N,CP_Drtn,TT_Task,DT_FixedDrtn,TK_NotStart,HHI.1391,Quailty Check(Visual Inspection & PT),,450,0,40,0,0,0,40,0,0,0,,,,2014-07-07 11:00,2014-07-14 15:00,,2014-05-12 07:00,2014-05-15 17:00,2014-05-12 07:00,2014-05-15 17:00,2014-05-12 07:00,2014-05-15 17:00,2014-07-07 11:00,2014-07-14 15:00,,PT_Normal,,,,,qlMs1vCmQb2rgRHuDsMxvw,,,,N,0,0,,,2014-02-17 15:27,2014-03-01 17:06,admin,admin,
129,127772,6764,35235,6640,0,N,N,N,CP_Drtn,TT_Task,DT_FixedDrtn,TK_NotStart,HHI.1403,Perform RT for Tank#1 & #2,,450,0,10,0,0,0,10,0,0,0,,,,2014-08-03 16:00,2014-08-04 16:00,,2014-05-29 07:00,2014-05-29 17:00,2014-05-29 07:00,2014-05-29 17:00,2014-05-29 07:00,2014-05-29 17:00,2014-08-03 16:00,2014-08-04 16:00,,PT_Normal,,,,,iPc4L5m9QgixH+HAMdCbqg,57QxJzEdjEy1pDYy8+dWuQ,,,N,0,0,,,2014-02-17 15:27,2014-03-01 17:06,admin,admin,
130,127773,6764,35237,6640,0,N,N,N,CP_Drtn,TT_Task,DT_FixedDrtn,TK_NotStart,HHI.1306,Weld Outer Vertical Seam /Install the Stairways support on Shell,,450,0,10,0,384.000002,384.000002,10,85.333333,0,85.333333,,,,2014-05-04 07:00,2014-05-04 17:00,,2014-03-12 07:00,2014-03-12 17:00,2014-03-12 07:00,2014-03-12 17:00,2014-03-12 07:00,2014-03-12 17:00,2014-05-04 07:00,2014-05-04 17:00,,PT_Normal,,,,,JLCwD7cQRoiMj01a0VvV+A,707tADBiT36iTpznAT9lJw,,,N,0,0,,,2014-02-17 15:27,2014-03-01 17:06,admin,admin,
131,127774,6764,35237,6640,0,N,N,N,CP_Drtn,TT_Task,DT_FixedDrtn,TK_NotStart,HHI.1307,"Backgouge,Grinding & NDT Inside Vertical Seam",,450,0,10,0,101.333333,101.333333,10,33.066667,0,33.066667,,,,2014-05-05 07:00,2014-05-05 17:00,,2014-03-13 07:00,2014-03-13 17:00,2014-03-13 07:00,2014-03-13 17:00,2014-03-13 07:00,2014-03-13 17:00,2014-05-05 07:00,2014-05-05 17:00,,PT_Normal,,,,,9oOodLWTTXCvbW5sVy/9Rw,Y5mnZT7TSBm50jW8sljmHQ,,,N,0,0,,,2014-02-17 15:27,2014-03-01 17:06,admin,admin,
132,127775,6764,35237,6640,0,N,N,N,CP_Drtn,TT_Task,DT_FixedDrtn,TK_NotStart,HHI.1308,Weld Inside Vertical Seam,,450,0,10,0,202.666668,202.666668,10,85.333333,0,85.333333,,,,2014-05-06 07:00,2014-05-06 17:00,,2014-03-15 07:00,2014-03-15 17:00,2014-03-15 07:00,2014-03-15 17:00,2014-03-15 07:00,2014-03-15 17:00,2014-05-06 07:00,2014-05-06 17:00,,PT_Normal,,,,,xySH5diMSUG+f8y2awKgzw,gRGcRkefSa+G/q5QAuHXWw,,,N,0,0,,,2014-02-17 15:27,2014-03-01 17:06,admin,admin,
133,127776,6764,35237,6640,0,N,N,N,CP_Drtn,TT_Task,DT_FixedDrtn,TK_NotStart,HHI.1309,"""""Weld Outer Horizontal Seam between Shell Course # 1 & 2""""",,450,0,30,0,608,608,30,166.4,0,166.4,,,,2014-05-07 07:00,2014-05-10 17:00,,2014-03-16 07:00,2014-03-18 17:00,2014-03-16 07:00,2014-03-18 17:00,2014-03-16 07:00,2014-03-18 17:00,2014-05-07 07:00,2014-05-10 17:00,,PT_Normal,,,,,4m9yz5PgSBWmOjEJ6Kk/ug,RHnTJru0R76iHXmQHz917A,,,N,0,0,,,2014-02-17 15:27,2014-03-01 17:06,admin,admin,
134,127777,6764,35237,6640,0,N,N,N,CP_Drtn,TT_Task,DT_FixedDrtn,TK_NotStart,HHI.1310,"""""Backgouge & NDT Inside Horizontal Seam between Shell Course# 1 & 2""""",,450,0,10,0,122.666668,122.666668,10,85.333333,0,85.333333,,,,2014-05-11 07:00,2014-05-11 17:00,,2014-03-19 07:00,2014-03-19 17:00,2014-03-19 07:00,2014-03-19 17:00,2014-03-19 07:00,2014-03-19 17:00,2014-05-11 07:00,2014-05-11 17:00,,PT_Normal,,,,,nIrMDSGJSgqjB2sVGOMKMg,8+rvVp0HQyyFZBlwVhrr1Q,,,N,0,0,,,2014-02-17 15:27,2014-03-01 17:06,admin,admin,
135,127778,6764,35237,6640,0,N,N,N,CP_Drtn,TT_Task,DT_FixedDrtn,TK_NotStart,HHI.1311,"Weld Inner Horizontal Seam between Shell Course # 1 & 2""""",,450,0,20,0,608,608,20,166.4,0,166.4,,,,2014-05-12 07:00,2014-05-13 17:00,,2014-03-20 07:00,2014-03-22 17:00,2014-03-20 07:00,2014-03-22 17:00,2014-03-20 07:00,2014-03-22 17:00,2014-05-12 07:00,2014-05-13 17:00,,PT_Normal,,,,,/kY1eLVfTJCoD17j1fKhdA,DqBH7cY9TT+gvwnx3WHh0A,,,N,0,0,,,2014-02-17 15:27,2014-03-01 17:06,admin,admin,
136,127779,6764,35237,6640,0,N,N,N,CP_Drtn,TT_Task,DT_FixedDrtn,TK_NotStart,HHI.1312,Weld Shell Course# 1 to Annular Plate (from inside),,450,0,10,0,405.333336,405.333336,10,85.333333,0,85.333333,,,,2014-05-14 07:00,2014-05-14 17:00,,2014-03-23 07:00,2014-03-23 17:00,2014-03-23 07:00,2014-03-23 17:00,2014-03-23 07:00,2014-03-23 17:00,2014-05-14 07:00,2014-05-14 17:00,,PT_Normal,,,,,kODfUDn+TOiutbWPcfsrNQ,/450mofTRDOrO4rxsXFkJw,,,N,0,0,,,2014-02-17 15:27,2014-03-01 17:06,admin,admin,
137,127780,6764,35237,6640,0,N,N,N,CP_Drtn,TT_Task,DT_FixedDrtn,TK_NotStart,HHI.1315,Quailty Check(Visual Inspection),,450,0,140,0,27.111111,27.111111,140,33.066667,0,33.066667,,,,2014-05-03 07:00,2014-05-18 17:00,,2014-03-11 07:00,2014-03-26 17:00,2014-03-11 07:00,2014-03-26 17:00,2014-03-11 07:00,2014-03-26 17:00,2014-05-03 07:00,2014-05-18 17:00,,PT_Normal,,,,,qAFrxdQhSMiBXSO3K/r0sg,8mpLc6WpSQyUv0i4MzDXkg,,,N,0,0,,,2014-02-17 15:27,2014-03-01 17:06,admin,admin,
138,127781,6764,35237,6640,0,N,N,N,CP_Drtn,TT_Task,DT_FixedDrtn,TK_NotStart,HHI.1305,Erect & Tack Shell Course # 2 & Install Stagging Brackets,,450,0,20,0,272,272,20,32,0,32,,,,2014-05-03 07:00,2014-05-04 17:00,,2014-03-11 07:00,2014-03-12 17:00,2014-03-11 07:00,2014-03-12 17:00,2014-03-11 07:00,2014-03-12 17:00,2014-05-03 07:00,2014-05-04 17:00,,PT_Normal,,,,,dMrjQg32RvKx1ulhoEaBiQ,unUg/R+eSR+wmd6bZKX6Dw,,,N,0,0,,,2014-02-17 15:27,2014-03-01 17:06,admin,admin,
139,127782,6764,35237,6640,0,N,N,N,CP_Drtn,TT_Task,DT_FixedDrtn,TK_NotStart,HHI.1313,"Perform PT from inside,Complete the welding from outside & Perform Vaccum Box Testing",,450,0,20,0,426.666665,426.666665,20,128,0,128,,,,2014-05-15 07:00,2014-05-17 17:00,,2014-03-24 07:00,2014-03-25 17:00,2014-03-24 07:00,2014-03-25 17:00,2014-03-24 07:00,2014-03-25 17:00,2014-05-15 07:00,2014-05-17 17:00,,PT_Normal,,,,,Ex6wMMBwSnCVzP8oFK72dA,3/z/aYPjQCS5uCn+Rpp3dA,,,N,0,0,,,2014-02-17 15:27,2014-03-01 17:06,admin,admin,
140,127783,6764,35237,6640,0,N,N,N,CP_Drtn,TT_Task,DT_FixedDrtn,TK_NotStart,HHI.1314,Weld Bottom Sketch Plates to Annular Plate,,450,0,10,0,0,0,10,0,0,0,,,,2014-05-18 07:00,2014-05-18 17:00,,2014-03-26 07:00,2014-03-26 17:00,2014-03-26 07:00,2014-03-26 17:00,2014-03-26 07:00,2014-03-26 17:00,2014-05-18 07:00,2014-05-18 17:00,,PT_Normal,,,,,yZzBmvdIRASU5GCkYvofeQ,,,,N,0,0,,,2014-02-17 15:27,2014-03-01 17:06,admin,admin,
141,127784,6764,35238,6640,0,N,N,N,CP_Drtn,TT_Task,DT_FixedDrtn,TK_NotStart,HHI.1316,Erect & Tack Shell Course # 2& Install Stagging Brackets,,450,0,20,0,340,340,20,48,0,48,,,,2014-05-05 07:00,2014-05-06 17:00,,2014-03-13 07:00,2014-03-15 17:00,2014-03-13 07:00,2014-03-15 17:00,2014-03-13 07:00,2014-03-15 17:00,2014-05-05 07:00,2014-05-06 17:00,,PT_Normal,,,,,yCPiSdghTQOTryetBvjlpg,PO8G6Q4CRqCEeMnyzXhWPg,,,N,0,0,,,2014-02-17 15:27,2014-03-01 17:06,admin,admin,
142,127785,6764,35238,6640,0,N,N,N,CP_Drtn,TT_Task,DT_FixedDrtn,TK_NotStart,HHI.1317,Weld Outer Vertical Seam /Install the Stairways support on Shell,,450,0,10,0,384.000002,384.000002,10,85.333333,0,85.333333,,,,2014-05-06 07:00,2014-05-06 17:00,,2014-03-15 07:00,2014-03-15 17:00,2014-03-15 07:00,2014-03-15 17:00,2014-03-15 07:00,2014-03-15 17:00,2014-05-06 07:00,2014-05-06 17:00,,PT_Normal,,,,,GxT0PpSXQaOYv3qN1ShmJA,MoZhE+k0QICSYLyhxbT1Gg,,,N,0,0,,,2014-02-17 15:27,2014-03-01 17:06,admin,admin,
143,127786,6764,35238,6640,0,N,N,N,CP_Drtn,TT_Task,DT_FixedDrtn,TK_NotStart,HHI.1318,"Backgouge,Grinding & NDT Inside Vertical Seam",,450,0,10,0,97.111111,97.111111,10,33.066667,0,33.066667,,,,2014-05-07 07:00,2014-05-07 17:00,,2014-03-16 07:00,2014-03-16 17:00,2014-03-16 07:00,2014-03-16 17:00,2014-03-16 07:00,2014-03-16 17:00,2014-05-07 07:00,2014-05-07 17:00,,PT_Normal,,,,,2qf7/Qr3RjqV/Lp62X+eWA,x6qYZJgRRN25bJtBOUtxkw,,,N,0,0,,,2014-02-17 15:27,2014-03-01 17:06,admin,admin,
144,127787,6764,35238,6640,0,N,N,N,CP_Drtn,TT_Task,DT_FixedDrtn,TK_NotStart,HHI.1319,Weld Inside Vertical Seam,,450,0,10,0,202.666668,202.666668,10,85.333333,0,85.333333,,,,2014-05-08 07:00,2014-05-08 17:00,,2014-03-17 07:00,2014-03-17 17:00,2014-03-17 07:00,2014-03-17 17:00,2014-03-17 07:00,2014-03-17 17:00,2014-05-08 07:00,2014-05-08 17:00,,PT_Normal,,,,,QDf1W/X2QSS0D0z+/z86zA,LEpvqVJXTRalKamf5NklSw,,,N,0,0,,,2014-02-17 15:27,2014-03-01 17:06,admin,admin,
145,127788,6764,35238,6640,0,N,N,N,CP_Drtn,TT_Task,DT_FixedDrtn,TK_NotStart,HHI.1320,"""""Weld Outer Horizontal Seam between Shell Course # 1 & 2""""",,450,0,30,0,608,608,30,166.4,0,166.4,,,,2014-05-10 07:00,2014-05-12 17:00,,2014-03-18 07:00,2014-03-20 17:00,2014-03-18 07:00,2014-03-20 17:00,2014-03-18 07:00,2014-03-20 17:00,2014-05-10 07:00,2014-05-12 17:00,,PT_Normal,,,,,OH+/lYJ2QSCMDPXnT6h1hQ,l0UkGj5nTTeNYFB9rs2+WQ,,,N,0,0,,,2014-02-17 15:27,2014-03-01 17:06,admin,admin,
146,127789,6764,35238,6640,0,N,N,N,CP_Drtn,TT_Task,DT_FixedDrtn,TK_NotStart,HHI.1321,"""""Backgouge & NDT Inside Horizontal Seam between Shell Course# 1 & 2""""",,450,0,10,0,122.666668,122.666668,10,85.333333,0,85.333333,,,,2014-05-13 07:00,2014-05-13 17:00,,2014-03-22 07:00,2014-03-22 17:00,2014-03-22 07:00,2014-03-22 17:00,2014-03-22 07:00,2014-03-22 17:00,2014-05-13 07:00,2014-05-13 17:00,,PT_Normal,,,,,dSgGbdo+TPKcz3XbXzu8hw,T1p/D4z8QAuE9cMDcfZ2AQ,,,N,0,0,,,2014-02-17 15:27,2014-03-01 17:06,admin,admin,
147,127790,6764,35238,6640,0,N,N,N,CP_Drtn,TT_Task,DT_FixedDrtn,TK_NotStart,HHI.1322,"Weld Inner Horizontal Seam between Shell Course # 1 & 2""""",,450,0,20,0,608,608,20,166.4,0,166.4,,,,2014-05-14 07:00,2014-05-15 17:00,,2014-03-23 07:00,2014-03-24 17:00,2014-03-23 07:00,2014-03-24 17:00,2014-03-23 07:00,2014-03-24 17:00,2014-05-14 07:00,2014-05-15 17:00,,PT_Normal,,,,,I1Ia52+nQl+7XzVoLiRkfw,w9Ig4J2YQlGM6GlbS5ByXQ,,,N,0,0,,,2014-02-17 15:27,2014-03-01 17:06,admin,admin,
148,127791,6764,35238,6640,0,N,N,N,CP_Drtn,TT_Task,DT_FixedDrtn,TK_NotStart,HHI.1323,Weld Shell Course# 1 to Annular Plate (from inside),,450,0,10,0,405.333336,405.333336,10,85.333333,0,85.333333,,,,2014-05-17 07:00,2014-05-17 17:00,,2014-03-25 07:00,2014-03-25 17:00,2014-03-25 07:00,2014-03-25 17:00,2014-03-25 07:00,2014-03-25 17:00,2014-05-17 07:00,2014-05-17 17:00,,PT_Normal,,,,,L/OLxGJ5R3We4qVz3CCFvQ,YYw16VZqQvysi04CiC6Kzw,,,N,0,0,,,2014-02-17 15:27,2014-03-01 17:06,admin,admin,
149,127792,6764,35238,6640,0,N,N,N,CP_Drtn,TT_Task,DT_FixedDrtn,TK_NotStart,HHI.1324,"Perform PT from inside,Complete the welding from outside & Perform Vaccum Box Testing",,450,0,20,0,426.666665,426.666665,20,128,0,128,,,,2014-05-18 07:00,2014-05-19 17:00,,2014-03-26 07:00,2014-03-27 17:00,2014-03-26 07:00,2014-03-27 17:00,2014-03-26 07:00,2014-03-27 17:00,2014-05-18 07:00,2014-05-19 17:00,,PT_Normal,,,,,MVjxK3EsSKeB0jFWo9bKDA,Ije0nABvQPy3HY8VIhKIzA,,,N,0,0,,,2014-02-17 15:27,2014-03-01 17:06,admin,admin,
150,127793,6764,35238,6640,0,N,N,N,CP_Drtn,TT_Task,DT_FixedDrtn,TK_NotStart,HHI.1326,Quailty Check(Visual Inspection),,450,0,140,0,34.222222,34.222222,140,33.066667,0,33.066667,,,,2014-05-05 07:00,2014-05-20 17:00,,2014-03-13 07:00,2014-03-29 17:00,2014-03-13 07:00,2014-03-29 17:00,2014-03-13 07:00,2014-03-29 17:00,2014-05-05 07:00,2014-05-20 17:00,,PT_Normal,,,,,3/8XaHGrR4iX/mFTrE+LbA,mhGSQ7QzQ6iykEpqnzqx2g,,,N,0,0,,,2014-02-17 15:27,2014-03-01 17:06,admin,admin,
151,127794,6764,35238,6640,0,N,N,N,CP_Drtn,TT_Task,DT_FixedDrtn,TK_NotStart,HHI.1325,Weld Bottom Sketch Plates to Annular Plate,,450,0,10,0,0,0,10,0,0,0,,,,2014-05-20 07:00,2014-05-20 17:00,,2014-03-29 07:00,2014-03-29 17:00,2014-03-29 07:00,2014-03-29 17:00,2014-03-29 07:00,2014-03-29 17:00,2014-05-20 07:00,2014-05-20 17:00,,PT_Normal,,,,,V3yBKF1rTSqXAfBGDG9Xnw,,,,N,0,0,,,2014-02-17 15:27,2014-03-01 17:06,admin,admin,
152,127795,6764,35239,6640,0,N,N,N,CP_Drtn,TT_Task,DT_FixedDrtn,TK_NotStart,HHI.1327,Perform RT for Tank#1 & #2,,450,0,10,0,0,0,10,0,0,0,,,,2014-05-21 07:00,2014-05-21 17:00,,2014-03-30 07:00,2014-03-30 17:00,2014-03-30 07:00,2014-03-30 17:00,2014-03-30 07:00,2014-03-30 17:00,2014-05-21 07:00,2014-05-21 17:00,,PT_Normal,,,,,PpsonpOMQYKZGgTqf/YW2Q,fblkQIEz9UaACAlKeVUFvg,,,N,0,0,,,2014-02-17 15:27,2014-03-01 17:06,admin,admin,
153,127796,6764,35241,6640,0,N,N,N,CP_Drtn,TT_Task,DT_FixedDrtn,TK_NotStart,HHI.1267,"Install Sealent,Erect & Tack of Annular Plates",,480,0,10,0,80,80,10,8,0,8,,,,2014-03-27 07:00,2014-03-27 17:00,,2014-01-30 07:00,2014-01-30 17:00,2014-01-30 07:00,2014-01-30 17:00,2014-01-30 07:00,2014-01-30 17:00,2014-03-27 07:00,2014-03-27 17:00,,PT_Normal,,,,,qQGqChWKQsSKsZL9hlVJfA,8RcYRdIOQ+y00oMQbSGIug,,,N,0,0,,,2014-02-17 15:27,2014-03-01 17:06,admin,admin,
154,127797,6764,35241,6640,0,N,N,N,CP_Drtn,TT_Task,DT_FixedDrtn,TK_NotStart,HHI.1268,Welding of Annular Plates,,480,0,10,0,180,180,10,40,0,40,,,,2014-03-29 07:00,2014-03-29 17:00,,2014-02-01 07:00,2014-02-01 17:00,2014-02-01 07:00,2014-02-01 17:00,2014-02-01 07:00,2014-02-01 17:00,2014-03-29 07:00,2014-03-29 17:00,,PT_Normal,,,,,vgzVuukXSjO8VRkOGZhjXw,pVYtuz2QTSytYQBQgRhwZw,,,N,0,0,,,2014-02-17 15:27,2014-03-01 17:06,admin,admin,
155,127798,6764,35241,6640,0,N,N,N,CP_Drtn,TT_Task,DT_FixedDrtn,TK_NotStart,HHI.1269,"Quailty Check (Visual Inspection,PT & Vaccum Box Test)",,480,0,20,0,40,40,20,40,0,40,,,,2014-03-27 07:00,2014-03-29 17:00,,2014-01-30 07:00,2014-02-01 17:00,2014-01-30 07:00,2014-02-01 17:00,2014-01-30 07:00,2014-02-01 17:00,2014-03-27 07:00,2014-03-29 17:00,,PT_Normal,,,,,6qa05+9PSuiKCHzkbiL8MQ,xH1M55lHQ2a4Tkl1ZMtFIA,,,N,0,0,,,2014-02-17 15:27,2014-03-01 17:06,admin,admin,
156,127799,6764,35242,6640,0,N,N,N,CP_Drtn,TT_Task,DT_FixedDrtn,TK_NotStart,HHI.1270,Prepare & Lay Down Bottom Plates,,480,0,20,0,347.999998,347.999998,20,25.6,0,25.6,,,,2014-03-30 07:00,2014-03-31 17:00,,2014-02-02 07:00,2014-02-03 17:00,2014-02-02 07:00,2014-02-03 17:00,2014-02-02 07:00,2014-02-03 17:00,2014-03-30 07:00,2014-03-31 17:00,,PT_Normal,,,,,zA5E32WbRAiaPWO2j+1mzw,8kWek0qORJGIzRQnINIzTA,,,N,0,0,,,2014-02-17 15:27,2014-03-01 17:06,admin,admin,
157,127800,6764,35242,6640,0,N,N,N,CP_Drtn,TT_Task,DT_FixedDrtn,TK_NotStart,HHI.1277,Quailty Check (Visual Inspection& Vaccum Box Test),,480,30,150,0,21.333334,21.333334,150,42.666666,0,42.666666,,,,2014-03-30 07:00,2014-04-15 17:00,,2014-02-02 07:00,2014-02-18 17:00,2014-02-02 07:00,2014-02-18 17:00,2014-02-02 07:00,2014-02-18 17:00,2014-03-30 07:00,2014-04-15 17:00,,PT_Normal,,,,,xaogjj2/RLmqTtshx2pLNQ,2HaX5W6zRsewO3i1kc5dcw,,,N,0,0,,,2014-02-17 15:27,2014-03-01 17:06,admin,admin,
158,127801,6764,35242,6640,0,N,N,N,CP_Drtn,TT_Task,DT_FixedDrtn,TK_NotStart,HHI.1274,"Erect,Fitup of Sump",,530,50,10,0,51.999998,51.999998,10,42.666666,0,42.666666,,,,2014-04-14 07:00,2014-04-14 17:00,,2014-02-11 07:00,2014-02-11 17:00,2014-02-11 07:00,2014-02-11 17:00,2014-02-11 07:00,2014-02-11 17:00,2014-04-14 07:00,2014-04-14 17:00,,PT_Normal,,,,,5Gc6FCD2QNmjuRvhf9/1Eg,gmaELvxvTBeX+fz/qzbkDQ,,,N,0,0,,,2014-02-17 15:27,2014-03-01 17:06,admin,admin,
159,127802,6764,35242,6640,0,N,N,N,CP_Drtn,TT_Task,DT_FixedDrtn,TK_NotStart,HHI.1276,Weld Sump,,480,0,10,0,17.066666,17.066666,10,42.666666,0,42.666666,,,,2014-04-15 07:00,2014-04-15 17:00,,2014-02-18 07:00,2014-02-18 17:00,2014-02-18 07:00,2014-02-18 17:00,2014-02-18 07:00,2014-02-18 17:00,2014-04-15 07:00,2014-04-15 17:00,,PT_Normal,,,,,ZtZuAT7yT3yomGA4fW2HvA,ZCfaIGmvQDaKAFSP0UM+3g,,,N,0,0,,,2014-02-17 15:27,2014-03-01 17:06,admin,admin,
160,127803,6764,35242,6640,0,N,N,N,CP_Drtn,TT_Task,DT_FixedDrtn,TK_NotStart,HHI.1271,Fit/Tack Bottom Plates-Short Seams,,480,0,20,0,0,0,20,0,0,0,,,,2014-04-02 07:00,2014-04-03 17:00,,2014-02-05 07:00,2014-02-06 17:00,2014-02-05 07:00,2014-02-06 17:00,2014-02-05 07:00,2014-02-06 17:00,2014-04-02 07:00,2014-04-03 17:00,,PT_Normal,,,,,BoGIUCKxTvCa5x3xn6UGyg,,,,N,0,0,,,2014-02-17 15:27,2014-03-01 17:06,admin,admin,
161,127804,6764,35242,6640,0,N,N,N,CP_Drtn,TT_Task,DT_FixedDrtn,TK_NotStart,HHI.1272,Weld Short Seams,,480,0,30,0,0,0,30,0,0,0,,,,2014-04-03 07:00,2014-04-06 17:00,,2014-02-06 07:00,2014-02-09 17:00,2014-02-06 07:00,2014-02-09 17:00,2014-02-06 07:00,2014-02-09 17:00,2014-04-03 07:00,2014-04-06 17:00,,PT_Normal,,,,,7vTYJMClR9u4pZnSJcUSaw,,,,N,0,0,,,2014-02-17 15:27,2014-03-01 17:06,admin,admin,
162,127805,6764,35242,6640,0,N,N,N,CP_Drtn,TT_Task,DT_FixedDrtn,TK_NotStart,HHI.1273,Fit/Tack Bottom Plates-Long Seams,,480,0,20,0,0,0,20,0,0,0,,,,2014-04-07 07:00,2014-04-08 17:00,,2014-02-10 07:00,2014-02-11 17:00,2014-02-10 07:00,2014-02-11 17:00,2014-02-10 07:00,2014-02-11 17:00,2014-04-07 07:00,2014-04-08 17:00,,PT_Normal,,,,,/Ax9Pb+KSGykRHYDdmCDcQ,,,,N,0,0,,,2014-02-17 15:27,2014-03-01 17:06,admin,admin,
163,127806,6764,35242,6640,0,N,N,N,CP_Drtn,TT_Task,DT_FixedDrtn,TK_NotStart,HHI.1275,Weld Long Seams,,480,0,70,0,0,0,70,0,0,0,,,,2014-04-08 07:00,2014-04-15 17:00,,2014-02-11 07:00,2014-02-18 17:00,2014-02-11 07:00,2014-02-18 17:00,2014-02-11 07:00,2014-02-18 17:00,2014-04-08 07:00,2014-04-15 17:00,,PT_Normal,,,,,4HkNKDLkQeCkmRv8ilk88g,,,,N,0,0,,,2014-02-17 15:27,2014-03-01 17:06,admin,admin,
164,127807,6764,35244,6640,0,N,N,N,CP_Drtn,TT_Task,DT_FixedDrtn,TK_NotStart,HHI.1380,Erect & Tack Columns,,540,90,30,0,1680,1680,30,48,0,48,,,,2014-07-09 09:00,2014-07-14 15:00,,2014-05-03 07:00,2014-05-05 17:00,2014-05-03 07:00,2014-05-05 17:00,2014-05-03 07:00,2014-05-05 17:00,2014-07-09 09:00,2014-07-14 15:00,,PT_Normal,,,,,EtH+pRkQTuOQaRUcted7fg,FobBP2a4RG2YYVTNBiSr5Q,,,N,0,0,,,2014-02-17 15:27,2014-03-01 17:06,admin,admin,
165,127808,6764,35245,6640,0,N,N,N,CP_Drtn,TT_Task,DT_FixedDrtn,TK_NotStart,HHI.1379,Erect & Tack Columns,,450,0,30,0,1680,1680,30,48,0,48,,,,2014-06-22 07:00,2014-06-24 17:00,,2014-04-30 07:00,2014-05-03 17:00,2014-04-30 07:00,2014-05-03 17:00,2014-04-30 07:00,2014-05-03 17:00,2014-06-22 07:00,2014-06-24 17:00,,PT_Normal,,,,,XgHcuigUS+S3wtKoTveTcg,Hm4+Lr04SECsNpF5aUGvLQ,,,N,0,0,,,2014-02-17 15:27,2014-03-01 17:06,admin,admin,
166,127809,6764,35247,6640,0,N,N,N,CP_Drtn,TT_Task,DT_FixedDrtn,TK_NotStart,HHI.1465,Mechanical Completion (MCC) & Final Isnpection Before Hydrotesting,,450,0,20,0,16,16,20,40,0,40,,,,2014-09-09 11:00,2014-09-11 11:00,,2014-07-15 09:00,2014-07-19 11:00,2014-07-15 09:00,2014-07-19 11:00,2014-07-15 09:00,2014-07-19 11:00,2014-09-09 11:00,2014-09-11 11:00,,PT_Normal,,,,,3v+dsS4TTPCKBqw5gYyzXg,tVucdmFjSoST+dQLyNy4Fw,,,N,0,0,,,2014-02-17 15:27,2014-03-01 17:06,admin,admin,
167,127810,6764,35248,6640,0,N,N,N,CP_Drtn,TT_Task,DT_FixedDrtn,TK_NotStart,HHI.1466,Mechanical Completion (MCC) & Final Inspection Before Hydrotesting,,630,0,20,0,24,24,20,40,0,40,,,,2014-10-28 16:00,2014-10-30 16:00,,2014-08-15 13:30,2014-08-17 16:00,2014-08-15 13:30,2014-08-17 16:00,2014-08-15 13:30,2014-08-17 16:00,2014-10-28 16:00,2014-10-30 16:00,,PT_Normal,,,,,hGIlCVNvTZ6JqpUH8Gp0Fg,AHg8YuA3Skq57GoXdNWleg,,,N,0,0,,,2014-02-17 15:27,2014-03-01 17:03,admin,admin,
168,127811,6764,35250,6640,0,N,N,N,CP_Drtn,TT_Task,DT_FixedDrtn,TK_NotStart,HHI.1451,"Erect,Laydown & install Girders to Columns (2 Layers ,15 Girders)",,630,0,20,0,341.333331,341.333331,20,17.066666,0,17.066666,,,,2014-10-02 16:00,2014-10-07 16:00,,2014-07-19 11:00,2014-07-22 13:00,2014-07-19 11:00,2014-07-22 13:00,2014-07-19 11:00,2014-07-22 13:00,2014-10-02 16:00,2014-10-07 16:00,,PT_Normal,,,,,J284axSoRGSKSWPJg0yfKQ,VvaMiLZ3RAec+fg22SUkUA,,,N,0,0,,,2014-02-17 15:27,2014-03-01 17:03,admin,admin,
169,127812,6764,35251,6640,0,N,N,N,CP_Drtn,TT_Task,DT_FixedDrtn,TK_NotStart,HHI.1463,Erect & Install Stairways & Platforms & Handrails for Roof,,630,0,20,0,341.333337,341.333337,20,17.066667,0,17.066667,,,,2014-10-27 16:00,2014-10-29 16:00,,2014-08-14 11:00,2014-08-16 16:00,2014-08-14 11:00,2014-08-16 16:00,2014-08-14 11:00,2014-08-16 16:00,2014-10-27 16:00,2014-10-29 16:00,,PT_Normal,,,,,qqBmKH1CQV6Ty7pDxofN3g,JC++5UrkQX+zfYQ2erpMKw,,,N,0,0,,,2014-02-17 15:27,2014-03-01 17:03,admin,admin,
170,127813,6764,35251,6640,0,N,N,N,CP_Drtn,TT_Task,DT_FixedDrtn,TK_NotStart,HHI.1462,Erect & Install Stairways & Platforms for Shell,,630,0,20,0,341.333337,341.333337,20,17.066667,0,17.066667,,,,2014-10-25 16:00,2014-10-27 16:00,,2014-08-12 11:00,2014-08-14 11:00,2014-08-12 11:00,2014-08-14 11:00,2014-08-12 11:00,2014-08-14 11:00,2014-10-25 16:00,2014-10-27 16:00,,PT_Normal,,,,,8lQYqKWdREG+8mA7hQJ5Mg,8luPrszbRvCO9llbnOtarw,,,N,0,0,,,2014-02-17 15:27,2014-03-01 17:03,admin,admin,
171,127814,6764,35251,6640,0,N,N,N,CP_Drtn,TT_Task,DT_FixedDrtn,TK_NotStart,HHI.1464,Quality Check,,630,0,10,0,0,0,10,0,0,0,,,,2014-10-27 16:00,2014-10-28 16:00,,2014-08-14 11:00,2014-08-15 13:30,2014-08-14 11:00,2014-08-15 13:30,2014-08-14 11:00,2014-08-15 13:30,2014-10-27 16:00,2014-10-28 16:00,,PT_Normal,,,,,m+Jy9hrxR7i+S6E3jr7VxA,PP9WkB+s00WruaxVYjqKcA,,,N,0,0,,,2014-02-17 15:27,2014-03-01 17:03,admin,admin,
172,127815,6764,35252,6640,0,N,N,N,CP_Drtn,TT_Task,DT_FixedDrtn,TK_NotStart,HHI.1452,"Erect,Lay Down & Install the Rafters (170 Rafters)/ Install Internal Piping Brackets/Piping",,630,0,80,0,1343.999994,1343.999994,80,17.066666,0,17.066666,,,,2014-10-06 16:00,2014-10-15 16:00,,2014-07-21 09:00,2014-08-03 16:00,2014-07-21 09:00,2014-08-03 16:00,2014-07-21 09:00,2014-08-03 16:00,2014-10-06 16:00,2014-10-15 16:00,,PT_Normal,,,,,F6iHn9t6QGyDwr9XTzGlVw,kWd0PmqKTkONau9xeEp5/Q,,,N,0,0,,,2014-02-17 15:27,2014-03-01 17:03,admin,admin,
173,127816,6764,35253,6640,0,N,N,N,CP_Drtn,TT_Task,DT_FixedDrtn,TK_NotStart,HHI.1453,Prepare/Lay Down Roof Plates (80 Plates),,630,0,60,0,864.000004,864.000004,60,17.066667,0,17.066667,,,,2014-10-09 16:00,2014-10-16 16:00,,2014-07-27 09:00,2014-08-04 16:00,2014-07-27 09:00,2014-08-04 16:00,2014-07-27 09:00,2014-08-04 16:00,2014-10-09 16:00,2014-10-16 16:00,,PT_Normal,,,,,2/hoYRjWSLq1OdvxDRIB3A,yaug2E1oTX++PxDKXpPz/g,,,N,0,0,,,2014-02-17 15:27,2014-03-01 17:03,admin,admin,
174,127817,6764,35253,6640,0,N,N,N,CP_Drtn,TT_Task,DT_FixedDrtn,TK_NotStart,HHI.1454,Tacking of Roof Plates,,630,0,60,0,968,968,60,0,0,0,,,,2014-10-09 16:00,2014-10-16 16:00,,2014-07-27 09:00,2014-08-04 16:00,2014-07-27 09:00,2014-08-04 16:00,2014-07-27 09:00,2014-08-04 16:00,2014-10-09 16:00,2014-10-16 16:00,,PT_Normal,,,,,hGSeUp86QRe2ItGabhOtCQ,nU6ntAuDTyGQEMg77FJ+wA,,,N,0,0,,,2014-02-17 15:27,2014-03-01 17:03,admin,admin,
175,127818,6764,35253,6640,0,N,N,N,CP_Drtn,TT_Task,DT_FixedDrtn,TK_NotStart,HHI.1455,Welding of Roof Plates (Short Seams),,630,0,20,0,544,544,20,128,0,128,,,,2014-10-12 16:00,2014-10-14 16:00,,2014-07-31 11:00,2014-08-02 16:00,2014-07-31 11:00,2014-08-02 16:00,2014-07-31 11:00,2014-08-02 16:00,2014-10-12 16:00,2014-10-14 16:00,,PT_Normal,,,,,oe0fST0DQLS0RReMXBypkw,lOaPZbaGRNm99bKlOQtD1w,,,N,0,0,,,2014-02-17 15:27,2014-03-01 17:03,admin,admin,
176,127819,6764,35253,6640,0,N,N,N,CP_Drtn,TT_Task,DT_FixedDrtn,TK_NotStart,HHI.1456,Welding of Roof Plates (Long Seams),,630,0,50,0,1728.000001,1728.000001,50,249.6,0,249.6,,,,2014-10-14 16:00,2014-10-20 16:00,,2014-08-02 16:00,2014-08-07 16:00,2014-08-02 16:00,2014-08-07 16:00,2014-08-02 16:00,2014-08-07 16:00,2014-10-14 16:00,2014-10-20 16:00,,PT_Normal,,,,,gIQ2lQDzQuKdMd5PHuLpEQ,cwQbwNuoTLeV1nYINHd/XQ,,,N,0,0,,,2014-02-17 15:27,2014-03-01 17:03,admin,admin,
177,127820,6764,35253,6640,0,N,N,N,CP_Drtn,TT_Task,DT_FixedDrtn,TK_NotStart,HHI.1457,Tack of Roof Plates to Curb Angle,,640,10,20,0,416,416,20,0,0,0,,,,2014-10-18 16:00,2014-10-20 16:00,,2014-08-04 16:00,2014-08-06 16:00,2014-08-04 16:00,2014-08-06 16:00,2014-08-04 16:00,2014-08-06 16:00,2014-10-18 16:00,2014-10-20 16:00,,PT_Normal,,,,,+Mv2ym2iRHSincJ+WGaMMg,Vz+NMYIsQ8OC+OuHlrH5Qg,,,N,0,0,,,2014-02-17 15:27,2014-03-01 17:03,admin,admin,
178,127821,6764,35253,6640,0,N,N,N,CP_Drtn,TT_Task,DT_FixedDrtn,TK_NotStart,HHI.1458,Welding of Roof Plates to Curb Angle,,630,0,20,0,608.000003,608.000003,20,85.333333,0,85.333333,,,,2014-10-20 16:00,2014-10-22 16:00,,2014-08-07 16:00,2014-08-10 11:00,2014-08-07 16:00,2014-08-10 11:00,2014-08-07 16:00,2014-08-10 11:00,2014-10-20 16:00,2014-10-22 16:00,,PT_Normal,,,,,8x3Y5vsoQUmjLDaeV9h5XA,Tiub6DMKT7qcCORrGs6Naw,,,N,0,0,,,2014-02-17 15:27,2014-03-01 17:03,admin,admin,
179,127822,6764,35253,6640,0,N,N,N,CP_Drtn,TT_Task,DT_FixedDrtn,TK_NotStart,HHI.1461,"Quailty Check (Visual Inspection& Vaccum Box Test,PT,Air Leak Test for Roof Manholes& Nozzles))",,630,0,130,0,27.111111,27.111111,130,33.066667,0,33.066667,,,,2014-10-09 16:00,2014-10-25 16:00,,2014-07-27 09:00,2014-08-12 11:00,2014-07-27 09:00,2014-08-12 11:00,2014-07-27 09:00,2014-08-12 11:00,2014-10-09 16:00,2014-10-25 16:00,,PT_Normal,,,,,fKl7QgB9QbmXE5P56PIibA,UKV7MRaKQD+PPWimBFGXsQ,,,N,0,0,,,2014-02-17 15:27,2014-03-01 17:03,admin,admin,
180,127823,6764,35253,6640,0,N,N,N,CP_Drtn,TT_Task,DT_FixedDrtn,TK_NotStart,HHI.1459,"Fit,Weld Manholes ,Nozzles on Roof /install Top Platform Supports on Roof",,630,0,20,0,0,0,20,0,0,0,,,,2014-10-22 16:00,2014-10-25 16:00,,2014-08-10 11:00,2014-08-12 11:00,2014-08-10 11:00,2014-08-12 11:00,2014-08-10 11:00,2014-08-12 11:00,2014-10-22 16:00,2014-10-25 16:00,,PT_Normal,,,,,n70XXtjgTkag9Ds1VYiejA,kwVagvVoZ0mZIAWkn3VOig,,,N,0,0,,,2014-02-17 15:27,2014-03-01 17:03,admin,admin,
181,127824,6764,35253,6640,0,N,N,N,CP_Drtn,TT_Task,DT_FixedDrtn,TK_NotStart,HHI.1460,Weld Internal Piping to Nozzle N1,,630,0,10,0,0,0,10,0,0,0,,,,2014-10-23 16:00,2014-10-25 16:00,,2014-08-11 11:00,2014-08-12 11:00,2014-08-11 11:00,2014-08-12 11:00,2014-08-11 11:00,2014-08-12 11:00,2014-10-23 16:00,2014-10-25 16:00,,PT_Normal,,,,,YutE1sQaSQKP8X/nOu7FnA,PF9Bglt11Eu6z+CjIhFQ9w,,,N,0,0,,,2014-02-17 15:27,2014-03-01 17:03,admin,admin,
182,127825,6764,35254,6640,0,N,N,N,CP_Drtn,TT_Task,DT_FixedDrtn,TK_NotStart,HHI.1444,"""""Fit & Tack 
Shell Course # 7 & Top Curb Angle",,630,0,20,0,255.999999,255.999999,20,8.533333,0,8.533333,,,,2014-09-30 16:00,2014-10-02 16:00,,2014-07-15 09:00,2014-07-19 11:00,2014-07-15 09:00,2014-07-19 11:00,2014-07-15 09:00,2014-07-19 11:00,2014-09-30 16:00,2014-10-02 16:00,,PT_Normal,,,,,aJBoq2WjT+2jXMNIN4js2Q,4fRUXfheRh2bqNGfeOIUtA,,,N,0,0,,,2014-02-17 15:27,2014-03-01 17:03,admin,admin,
183,127826,6764,35254,6640,0,N,N,N,CP_Drtn,TT_Task,DT_FixedDrtn,TK_NotStart,HHI.1445,Weld Outer Horizontal Seam between Shell Course # 7 & Top Curb Angle,,640,0,10,0,128,128,10,33.066667,0,33.066667,,,,2014-10-06 16:00,2014-10-07 16:00,,2014-07-19 11:00,2014-07-20 15:00,2014-07-19 11:00,2014-07-20 15:00,2014-07-19 11:00,2014-07-20 15:00,2014-10-06 16:00,2014-10-07 16:00,,PT_Normal,,,,,DUSzvhWHTAiffaCAO5KdfQ,JvvGVt45RRCRe/PZV/zULQ,,,N,0,0,,,2014-02-17 15:27,2014-03-01 17:03,admin,admin,
184,127827,6764,35254,6640,0,N,N,N,CP_Drtn,TT_Task,DT_FixedDrtn,TK_NotStart,HHI.1446,"""""Backgouge & NDT Inside Horizontal Seam between Shell Course# 7 & Top Curb Angle",,640,10,10,0,90,90,10,33.066667,0,33.066667,,,,2014-10-06 16:00,2014-10-07 16:00,,2014-07-19 11:00,2014-07-20 15:00,2014-07-19 11:00,2014-07-20 15:00,2014-07-19 11:00,2014-07-20 15:00,2014-10-06 16:00,2014-10-07 16:00,,PT_Normal,,,,,lTLGQvTzTTWCacv9xFoTmQ,1JBzkU6KTAGLZW/N67m4PQ,,,N,0,0,,,2014-02-17 15:27,2014-03-01 17:03,admin,admin,
185,127828,6764,35254,6640,0,N,N,N,CP_Drtn,TT_Task,DT_FixedDrtn,TK_NotStart,HHI.1448,Weld Inner Horizontal Seam between Shell Course # 7 & Top Curb Angle,,630,0,10,0,191.333334,191.333334,10,33.066667,0,33.066667,,,,2014-10-07 16:00,2014-10-08 16:00,,2014-07-22 13:00,2014-07-24 11:00,2014-07-22 13:00,2014-07-24 11:00,2014-07-22 13:00,2014-07-24 11:00,2014-10-07 16:00,2014-10-08 16:00,,PT_Normal,,,,,0IZrVG86SUSaHcUmW211Vw,xkyR5i0PQ/mxms0CJVabfg,,,N,0,0,,,2014-02-17 15:27,2014-03-01 17:03,admin,admin,
186,127829,6764,35254,6640,0,N,N,N,CP_Drtn,TT_Task,DT_FixedDrtn,TK_NotStart,HHI.1450,Quailty Check (Visual Inspection),,630,0,50,0,42.666664,42.666664,50,42.666667,0,42.666667,,,,2014-09-30 16:00,2014-10-08 16:00,,2014-07-15 09:00,2014-07-24 11:00,2014-07-15 09:00,2014-07-24 11:00,2014-07-15 09:00,2014-07-24 11:00,2014-09-30 16:00,2014-10-08 16:00,,PT_Normal,,,,,sjdhgnWFTlmCxMKTzAOlSw,puuHkI7GSieHTAHzZ+Lr6Q,,,N,0,0,,,2014-02-17 15:27,2014-03-01 17:03,admin,admin,
187,127830,6764,35254,6640,0,N,N,N,CP_Drtn,TT_Task,DT_FixedDrtn,TK_NotStart,HHI.1447,"Fit up,Tack of Gusset Plates to Shell",,630,0,20,0,341.333337,341.333337,20,17.066667,0,17.066667,,,,2014-10-02 16:00,2014-10-07 16:00,,2014-07-19 11:00,2014-07-22 13:00,2014-07-19 11:00,2014-07-22 13:00,2014-07-19 11:00,2014-07-22 13:00,2014-10-02 16:00,2014-10-07 16:00,,PT_Normal,,,,,Fyr84+jFQH6bMNjH7KWxUQ,WRu6BV2mTceP+d9OQ5RfBA,,,N,0,0,,,2014-02-17 15:27,2014-03-01 17:03,admin,admin,
188,127831,6764,35254,6640,0,N,N,N,CP_Drtn,TT_Task,DT_FixedDrtn,TK_NotStart,HHI.1449,Welding of Gusset Plates,,630,0,10,0,202.666668,202.666668,10,85.333333,0,85.333333,,,,2014-10-07 16:00,2014-10-08 16:00,,2014-07-22 13:00,2014-07-24 11:00,2014-07-22 13:00,2014-07-24 11:00,2014-07-22 13:00,2014-07-24 11:00,2014-10-07 16:00,2014-10-08 16:00,,PT_Normal,,,,,bXkgoIKgQUGsPSshBynQsQ,Lx6/tZJQQuqoYcNDllu+pg,,,N,0,0,,,2014-02-17 15:27,2014-03-01 17:03,admin,admin,
189,127832,6764,35256,6640,0,N,N,N,CP_Drtn,TT_Task,DT_FixedDrtn,TK_NotStart,HHI.1328,Erect & Tack Shell Course # 3 & Install Stagging Brackets,,450,0,20,0,500,500,20,48,0,48,,,,2014-05-21 07:00,2014-05-22 17:00,,2014-03-30 07:00,2014-03-31 17:00,2014-03-30 07:00,2014-03-31 17:00,2014-03-30 07:00,2014-03-31 17:00,2014-05-21 07:00,2014-05-22 17:00,,PT_Normal,,,,,gGfdz42BRgumJQY/lKh/Ug,3ABTqofaSwqoi3DwCST68w,,,N,0,0,,,2014-02-17 15:27,2014-03-01 17:06,admin,admin,
190,127833,6764,35256,6640,0,N,N,N,CP_Drtn,TT_Task,DT_FixedDrtn,TK_NotStart,HHI.1329,Weld Outer Vertical Seam /Install the Stairways support on Shell,,450,0,10,0,160,160,10,85.333334,0,85.333334,,,,2014-05-22 07:00,2014-05-22 17:00,,2014-03-31 07:00,2014-03-31 17:00,2014-03-31 07:00,2014-03-31 17:00,2014-03-31 07:00,2014-03-31 17:00,2014-05-22 07:00,2014-05-22 17:00,,PT_Normal,,,,,zQaVpJzKQruc1rT3Wky52w,ecoVeevzQEO+tad5/lQwfQ,,,N,0,0,,,2014-02-17 15:27,2014-03-01 17:06,admin,admin,
191,127834,6764,35256,6640,0,N,N,N,CP_Drtn,TT_Task,DT_FixedDrtn,TK_NotStart,HHI.1330,Backgouge & NDT Inside Vertical Seam,,450,0,10,0,80,80,10,33.066667,0,33.066667,,,,2014-05-24 07:00,2014-05-24 17:00,,2014-04-01 07:00,2014-04-01 17:00,2014-04-01 07:00,2014-04-01 17:00,2014-04-01 07:00,2014-04-01 17:00,2014-05-24 07:00,2014-05-24 17:00,,PT_Normal,,,,,UL1ePcU+RzWkPJkNCe4jcw,RnxBQ223TnKatAm23xMTiQ,,,N,0,0,,,2014-02-17 15:27,2014-03-01 17:06,admin,admin,
192,127835,6764,35256,6640,0,N,N,N,CP_Drtn,TT_Task,DT_FixedDrtn,TK_NotStart,HHI.1331,Weld Inside Vertical Seam,,450,0,10,0,202.666668,202.666668,10,85.333333,0,85.333333,,,,2014-05-25 07:00,2014-05-25 17:00,,2014-04-02 07:00,2014-04-02 17:00,2014-04-02 07:00,2014-04-02 17:00,2014-04-02 07:00,2014-04-02 17:00,2014-05-25 07:00,2014-05-25 17:00,,PT_Normal,,,,,yFRZ76IxSla1fT60/A4whw,O+3M7U2YQ1GcZ+qy1l1zxQ,,,N,0,0,,,2014-02-17 15:27,2014-03-01 17:06,admin,admin,
193,127836,6764,35256,6640,0,N,N,N,CP_Drtn,TT_Task,DT_FixedDrtn,TK_NotStart,HHI.1332,"Weld Outer Horizontal Seam between Shell Course # 2 & 3""""",,450,0,30,0,608,608,30,128,0,128,,,,2014-05-26 07:00,2014-05-28 17:00,,2014-04-03 07:00,2014-04-06 17:00,2014-04-03 07:00,2014-04-06 17:00,2014-04-03 07:00,2014-04-06 17:00,2014-05-26 07:00,2014-05-28 17:00,,PT_Normal,,,,,vC2euq1lRM6+ePh+PmL9QA,s5y1mgUURjiWjEIZql6yMA,,,N,0,0,,,2014-02-17 15:27,2014-03-01 17:06,admin,admin,
194,127837,6764,35256,6640,0,N,N,N,CP_Drtn,TT_Task,DT_FixedDrtn,TK_NotStart,HHI.1333,"Backgouge & NDT Inside Horizontal Seam between Shell Course# 2 & 3""""",,450,0,10,0,87.111111,87.111111,10,33.066667,0,33.066667,,,,2014-05-29 07:00,2014-05-29 17:00,,2014-04-07 07:00,2014-04-07 17:00,2014-04-07 07:00,2014-04-07 17:00,2014-04-07 07:00,2014-04-07 17:00,2014-05-29 07:00,2014-05-29 17:00,,PT_Normal,,,,,/BX+DfIwSpC/d4h/6bPmUA,uRXIprt7R26HRCWxqUwSWQ,,,N,0,0,,,2014-02-17 15:27,2014-03-01 17:06,admin,admin,
195,127838,6764,35256,6640,0,N,N,N,CP_Drtn,TT_Task,DT_FixedDrtn,TK_NotStart,HHI.1334,"Weld Inner Horizontal Seam between Shell Course # 2 & 3""""",,450,0,10,0,608,608,10,128,0,128,,,,2014-05-31 07:00,2014-05-31 17:00,,2014-04-08 07:00,2014-04-08 17:00,2014-04-08 07:00,2014-04-08 17:00,2014-04-08 07:00,2014-04-08 17:00,2014-05-31 07:00,2014-05-31 17:00,,PT_Normal,,,,,oNpjgwwCRwWFdv7dMxyAKw,g8Zvf4OQRG+Hk/xKjcoeZg,,,N,0,0,,,2014-02-17 15:27,2014-03-01 17:06,admin,admin,
196,127839,6764,35256,6640,0,N,N,N,CP_Drtn,TT_Task,DT_FixedDrtn,TK_NotStart,HHI.1335,Quailty Check(Visual Inspection),,450,0,90,0,27.111111,27.111111,90,33.066667,0,33.066667,,,,2014-05-21 07:00,2014-05-31 17:00,,2014-03-30 07:00,2014-04-08 17:00,2014-03-30 07:00,2014-04-08 17:00,2014-03-30 07:00,2014-04-08 17:00,2014-05-21 07:00,2014-05-31 17:00,,PT_Normal,,,,,RHz6hDwoSVmFfIkXQsecpA,fvdhHabgRLKhlN4x489R9Q,,,N,0,0,,,2014-02-17 15:27,2014-03-01 17:06,admin,admin,
197,127840,6764,35257,6640,0,N,N,N,CP_Drtn,TT_Task,DT_FixedDrtn,TK_NotStart,HHI.1344,Perform RT for Tank#1 & #2,,450,0,10,0,0,0,10,0,0,0,,,,2014-06-03 07:00,2014-06-03 17:00,,2014-04-12 07:00,2014-04-12 17:00,2014-04-12 07:00,2014-04-12 17:00,2014-04-12 07:00,2014-04-12 17:00,2014-06-03 07:00,2014-06-03 17:00,,PT_Normal,,,,,tPLLJXsWTHyEaUeeT9wBpQ,GWmJtkqsBUq0z1uOQfCLww,,,N,0,0,,,2014-02-17 15:27,2014-03-01 17:06,admin,admin,
198,127841,6764,35258,6640,0,N,N,N,CP_Drtn,TT_Task,DT_FixedDrtn,TK_NotStart,HHI.1336,Erect & Tack Shell Course # 3 & Install Stagging Brackets,,450,0,20,0,560,560,20,48,0,48,,,,2014-05-24 07:00,2014-05-25 17:00,,2014-04-01 07:00,2014-04-02 17:00,2014-04-01 07:00,2014-04-02 17:00,2014-04-01 07:00,2014-04-02 17:00,2014-05-24 07:00,2014-05-25 17:00,,PT_Normal,,,,,W4jpxwFaSUaIAxz/60c7GQ,K2WkdUIHQlKIn6LCtxjcXQ,,,N,0,0,,,2014-02-17 15:27,2014-03-01 17:06,admin,admin,
199,127842,6764,35258,6640,0,N,N,N,CP_Drtn,TT_Task,DT_FixedDrtn,TK_NotStart,HHI.1337,Weld Outer Vertical Seam /Install the Stairways support on Shell,,450,0,10,0,202.666668,202.666668,10,85.333333,0,85.333333,,,,2014-05-25 07:00,2014-05-25 17:00,,2014-04-02 07:00,2014-04-02 17:00,2014-04-02 07:00,2014-04-02 17:00,2014-04-02 07:00,2014-04-02 17:00,2014-05-25 07:00,2014-05-25 17:00,,PT_Normal,,,,,X/f16NKgQaifH0LNU3WnDA,zWO1lynvR6u/yS3Wr0KlVw,,,N,0,0,,,2014-02-17 15:27,2014-03-01 17:06,admin,admin,
200,127843,6764,35258,6640,0,N,N,N,CP_Drtn,TT_Task,DT_FixedDrtn,TK_NotStart,HHI.1338,Backgouge & NDT Inside Vertical Seam,,450,0,10,0,108.444444,108.444444,10,33.066667,0,33.066667,,,,2014-05-26 07:00,2014-05-26 17:00,,2014-04-03 07:00,2014-04-03 17:00,2014-04-03 07:00,2014-04-03 17:00,2014-04-03 07:00,2014-04-03 17:00,2014-05-26 07:00,2014-05-26 17:00,,PT_Normal,,,,,5TIELUUGSH28c/Nb+/Q0Uw,ACgL7r7ZQcaxXhA1r6B0BA,,,N,0,0,,,2014-02-17 15:27,2014-03-01 17:06,admin,admin,
201,127844,6764,35258,6640,0,N,N,N,CP_Drtn,TT_Task,DT_FixedDrtn,TK_NotStart,HHI.1339,Weld Inside Vertical Seam,,450,0,10,0,202.666668,202.666668,10,85.333333,0,85.333333,,,,2014-05-27 07:00,2014-05-27 17:00,,2014-04-05 07:00,2014-04-05 17:00,2014-04-05 07:00,2014-04-05 17:00,2014-04-05 07:00,2014-04-05 17:00,2014-05-27 07:00,2014-05-27 17:00,,PT_Normal,,,,,SJ8oCogPTLmyYKu6u3pNCg,YvDxFX1RQhCPMsMiNv9Tsg,,,N,0,0,,,2014-02-17 15:27,2014-03-01 17:06,admin,admin,
202,127845,6764,35258,6640,0,N,N,N,CP_Drtn,TT_Task,DT_FixedDrtn,TK_NotStart,HHI.1340,"Weld Outer Horizontal Seam between Shell Course # 2 & 3""""",,450,0,30,0,608,608,30,128,0,128,,,,2014-05-28 07:00,2014-05-31 17:00,,2014-04-06 07:00,2014-04-08 17:00,2014-04-06 07:00,2014-04-08 17:00,2014-04-06 07:00,2014-04-08 17:00,2014-05-28 07:00,2014-05-31 17:00,,PT_Normal,,,,,7JAEic8zQDiimDpLEpICZw,z/FCNuMgTI+3N1jUISCquQ,,,N,0,0,,,2014-02-17 15:27,2014-03-01 17:06,admin,admin,
203,127846,6764,35258,6640,0,N,N,N,CP_Drtn,TT_Task,DT_FixedDrtn,TK_NotStart,HHI.1341,"Backgouge & NDT Inside Horizontal Seam between Shell Course# 2 & 3""""",,450,0,10,0,108.444444,108.444444,10,33.066667,0,33.066667,,,,2014-06-01 07:00,2014-06-01 17:00,,2014-04-09 07:00,2014-04-09 17:00,2014-04-09 07:00,2014-04-09 17:00,2014-04-09 07:00,2014-04-09 17:00,2014-06-01 07:00,2014-06-01 17:00,,PT_Normal,,,,,aEXVj5buRWea5SuRpSu6Rg,vAVP6gxUS8ONR9/WW1eCPw,,,N,0,0,,,2014-02-17 15:27,2014-03-01 17:06,admin,admin,
204,127847,6764,35258,6640,0,N,N,N,CP_Drtn,TT_Task,DT_FixedDrtn,TK_NotStart,HHI.1342,"Weld Inner Horizontal Seam between Shell Course # 2 & 3""""",,450,0,10,0,608,608,10,128,0,128,,,,2014-06-02 07:00,2014-06-02 17:00,,2014-04-10 07:00,2014-04-10 17:00,2014-04-10 07:00,2014-04-10 17:00,2014-04-10 07:00,2014-04-10 17:00,2014-06-02 07:00,2014-06-02 17:00,,PT_Normal,,,,,pzmQBZL4Tzq/p01We871yQ,4aVTXnzbTuWahop6aWCwyg,,,N,0,0,,,2014-02-17 15:27,2014-03-01 17:06,admin,admin,
205,127848,6764,35258,6640,0,N,N,N,CP_Drtn,TT_Task,DT_FixedDrtn,TK_NotStart,HHI.1343,Quailty Check(Visual Inspection),,450,0,90,0,32,32,90,42.666666,0,42.666666,,,,2014-05-24 07:00,2014-06-02 17:00,,2014-04-01 07:00,2014-04-10 17:00,2014-04-01 07:00,2014-04-10 17:00,2014-04-01 07:00,2014-04-10 17:00,2014-05-24 07:00,2014-06-02 17:00,,PT_Normal,,,,,6cMi4uroTJKPhtc6WJUG7A,0jLdmfHvQTGD5tTjJPaQXA,,,N,0,0,,,2014-02-17 15:27,2014-03-01 17:06,admin,admin,
206,127849,6764,35260,6640,0,N,N,N,CP_Drtn,TT_Task,DT_FixedDrtn,TK_NotStart,JF752.1501,"Install Valves,instruments (Supplied by client)",,0,0,10,0,0,0,10,0,0,0,,,,2015-02-03 16:00,2015-02-04 16:00,,2015-02-03 16:00,2015-02-04 16:00,2015-02-03 16:00,2015-02-04 16:00,2015-02-03 16:00,2015-02-04 16:00,2015-02-03 16:00,2015-02-04 16:00,,PT_Normal,,,,,c8EMl1gbQC6VOuAFgBvhRA,bTD7eL6rlky0ZUHPC1rYjg,,,Y,0,0,,,2014-02-17 15:27,2014-03-01 17:08,admin,admin,
207,127850,6764,35261,6640,0,N,N,N,CP_Drtn,TT_Task,DT_FixedDrtn,TK_NotStart,JF752.1500,"Install Valves,instruments (Supplied by client)",,220,0,10,0,0,0,10,0,0,0,,,,2015-02-03 16:00,2015-02-04 16:00,,2015-01-08 16:00,2015-01-10 16:00,2015-01-08 16:00,2015-01-10 16:00,2015-01-08 16:00,2015-01-10 16:00,2015-02-03 16:00,2015-02-04 16:00,,PT_Normal,,,,,0HUNogh4R1Cak+x2T/fBdA,olpW7cQMuEuSI7nfJnv66A,,,N,0,0,,,2014-02-17 15:27,2014-03-01 17:08,admin,admin,
208,127851,6764,35264,6640,0,N,N,N,CP_Drtn,TT_Task,DT_FixedDrtn,TK_NotStart,HHI.1483,Perform Roof Surface Preparation & Painting,,230,0,40,0,288,288,40,96,0,96,,,,2014-12-29 16:00,2015-01-03 16:00,,2014-12-02 16:00,2014-12-07 16:00,2014-12-02 16:00,2014-12-07 16:00,2014-12-02 16:00,2014-12-07 16:00,2014-12-29 16:00,2015-01-03 16:00,,PT_Normal,,,,,MhRsXJRARDuRHQRMprSUrQ,4JBkmeGwSpWdo6UfxjFHCw,,,N,0,0,,,2014-02-17 15:27,2014-03-01 17:08,admin,admin,
209,127852,6764,35264,6640,0,N,N,N,CP_Drtn,TT_Task,DT_FixedDrtn,TK_NotStart,HHI.1482,Perform Shell Surface Preparation & Painting,,220,0,50,0,280,280,50,80,0,80,,,,2014-12-22 16:00,2014-12-28 16:00,,2014-11-26 16:00,2014-12-02 16:00,2014-11-26 16:00,2014-12-02 16:00,2014-11-26 16:00,2014-12-02 16:00,2014-12-22 16:00,2014-12-28 16:00,,PT_Normal,,,,,05GMkyRvR++Eq5dmmhgIvA,LrlXE317Q+aWuDfOzUY6MA,,,N,0,0,,,2014-02-17 15:27,2014-03-01 17:08,admin,admin,
210,127853,6764,35264,6640,0,N,N,N,CP_Drtn,TT_Task,DT_FixedDrtn,TK_NotStart,HHI.1484,Quailty Check,,230,10,90,0,285.48,285.48,90,351.36,0,351.36,,,,2014-12-23 16:00,2015-01-03 16:00,,2014-11-26 16:00,2014-12-07 16:00,2014-11-26 16:00,2014-12-07 16:00,2014-11-26 16:00,2014-12-07 16:00,2014-12-23 16:00,2015-01-03 16:00,,PT_Normal,,,,,W718NKY9Q1agHsiSRRLnLA,yi2k371kQguON7ueEbGetQ,,,N,0,0,,,2014-02-17 15:27,2014-03-01 17:08,admin,admin,
211,127854,6764,35265,6640,0,N,N,N,CP_Drtn,TT_Task,DT_FixedDrtn,TK_NotStart,HHI.1489,Perform Bottom Surface Preparation & Painting,,220,0,40,0,0,0,40,0,0,0,,,,2015-01-29 16:00,2015-02-03 16:00,,2015-01-04 16:00,2015-01-08 16:00,2015-01-04 16:00,2015-01-08 16:00,2015-01-04 16:00,2015-01-08 16:00,2015-01-29 16:00,2015-02-03 16:00,,PT_Normal,,,,,9Hm2nGEbS5OeUdlSQA8WZA,,,,N,0,0,,,2014-02-17 15:27,2014-03-01 17:08,admin,admin,
212,127855,6764,35265,6640,0,N,N,N,CP_Drtn,TT_Task,DT_FixedDrtn,TK_NotStart,HHI.1487,Perform Shell course Surface Preparation & Painting,,220,0,100,0,0,0,100,0,0,0,,,,2015-01-12 16:00,2015-01-24 16:00,,2014-12-17 16:00,2014-12-29 16:00,2014-12-17 16:00,2014-12-29 16:00,2014-12-17 16:00,2014-12-29 16:00,2015-01-12 16:00,2015-01-24 16:00,,PT_Normal,,,,,wEOCU2CnQxa6Isl+baRdYQ,,,,N,0,0,,,2014-02-17 15:27,2014-03-01 17:08,admin,admin,
213,127856,6764,35265,6640,0,N,N,N,CP_Drtn,TT_Task,DT_FixedDrtn,TK_NotStart,HHI.1485,Install Scaffoldings,,220,0,100,0,0,0,100,0,0,0,,,,2014-12-22 16:00,2015-01-03 16:00,,2014-11-26 16:00,2014-12-08 16:00,2014-11-26 16:00,2014-12-08 16:00,2014-11-26 16:00,2014-12-08 16:00,2014-12-22 16:00,2015-01-03 16:00,,PT_Normal,,,,,JTpZOcj6RRu1vsJeYbdlNg,,,,N,0,0,,,2014-02-17 15:27,2014-03-01 17:08,admin,admin,
214,127857,6764,35265,6640,0,N,N,N,CP_Drtn,TT_Task,DT_FixedDrtn,TK_NotStart,HHI.1488,Dismantle Scaffoldings,,220,0,50,0,0,0,50,0,0,0,,,,2015-01-24 16:00,2015-01-29 16:00,,2014-12-29 16:00,2015-01-04 16:00,2014-12-29 16:00,2015-01-04 16:00,2014-12-29 16:00,2015-01-04 16:00,2015-01-24 16:00,2015-01-29 16:00,,PT_Normal,,,,,G2tbAng/SMC4/QpO1hn7QQ,,,,N,0,0,,,2014-02-17 15:27,2014-03-01 17:08,admin,admin,
215,127858,6764,35265,6640,0,N,N,N,CP_Drtn,TT_Task,DT_FixedDrtn,TK_NotStart,HHI.1490,Quailty Check (including Holiday Test),,220,0,270,0,103.009524,103.009524,270,515.04762,0,515.04762,,,,2015-01-03 16:00,2015-02-03 16:00,,2014-12-08 16:00,2015-01-08 16:00,2014-12-08 16:00,2015-01-08 16:00,2014-12-08 16:00,2015-01-08 16:00,2015-01-03 16:00,2015-02-03 16:00,,PT_Normal,,,,,iZBw85FpRj2LINz+wZrcjQ,j+b1I3XsTtyOS2ajzUTzcA,,,N,0,0,,,2014-02-17 15:27,2014-03-01 17:08,admin,admin,
216,127859,6764,35265,6640,0,N,N,N,CP_Drtn,TT_Task,DT_FixedDrtn,TK_NotStart,HHI.1486,Perform Roof Underside Surface Preparation & Painting,,220,0,80,0,1133.104762,1133.104762,80,206.019048,0,206.019048,,,,2015-01-03 16:00,2015-01-12 16:00,,2014-12-08 16:00,2014-12-17 16:00,2014-12-08 16:00,2014-12-17 16:00,2014-12-08 16:00,2014-12-17 16:00,2015-01-03 16:00,2015-01-12 16:00,,PT_Normal,,,,,7/OhxXZnSsyHy3v3i5PsZg,3SJgE2F2SzWf//X6uJxrHQ,,,N,0,0,,,2014-02-17 15:27,2014-03-01 17:08,admin,admin,
217,127860,6764,35267,6640,0,N,N,N,CP_Drtn,TT_Task,DT_FixedDrtn,TK_NotStart,HHI.1478,Weld & Align Roof Columns,,220,0,20,0,0,0,20,0,0,0,,,,2014-12-21 16:00,2014-12-23 16:00,,2014-11-25 16:00,2014-11-27 16:00,2014-11-25 16:00,2014-11-27 16:00,2014-11-25 16:00,2014-11-27 16:00,2014-12-21 16:00,2014-12-23 16:00,,PT_Normal,,,,,GICFADdPTr2r7axr05yIlw,,,,N,0,0,,,2014-02-17 15:27,2014-03-01 17:08,admin,admin,
218,127861,6764,35268,6640,0,N,N,N,CP_Drtn,TT_Task,DT_FixedDrtn,TK_NotStart,HHI.1479,Weld & Align Roof Columns,,0,0,20,0,0,0,20,0,0,0,,,,2014-12-20 16:00,2014-12-22 16:00,,2014-12-20 16:00,2014-12-22 16:00,2014-12-20 16:00,2014-12-22 16:00,2014-12-20 16:00,2014-12-22 16:00,2014-12-20 16:00,2014-12-22 16:00,,PT_Normal,,,,,viwAVmlXRFKZOCuOtcCgxA,,,,Y,0,0,,,2014-02-17 15:27,2014-03-01 17:08,admin,admin,
219,127862,6764,35270,6640,0,N,N,N,CP_Drtn,TT_Task,DT_FixedDrtn,TK_NotStart,HHI.1474,Tank Water Filling/Settlement from Desanilated Water Tank #1,,0,0,190,0,0,0,190,0,0,0,,,,2014-10-30 16:00,2014-11-22 16:00,,2014-10-30 16:00,2014-11-22 16:00,2014-10-30 16:00,2014-11-22 16:00,2014-10-30 16:00,2014-11-22 16:00,2014-10-30 16:00,2014-11-22 16:00,,PT_Normal,,,,,xKv1mSKeSsmz9iBZ3TMV6Q,,,,Y,0,0,,,2014-02-17 15:27,2014-03-01 17:07,admin,admin,
220,127863,6764,35270,6640,0,N,N,N,CP_Drtn,TT_Task,DT_FixedDrtn,TK_NotStart,HHI.1473,Remove Stagging Blanks/Brackets & Install Blind Flanges,,630,630,20,0,936,936,20,72,0,72,,,,2014-10-28 16:00,2014-10-30 16:00,,2014-08-15 13:30,2014-08-17 16:00,2014-08-15 13:30,2014-08-17 16:00,2014-08-15 13:30,2014-08-17 16:00,2014-10-28 16:00,2014-10-30 16:00,,PT_Normal,,,,,31zBvIbtRKiUOXYBGg78jg,0SncFAzAS+uSKytnb1gkQA,,,N,0,0,,,2014-02-17 15:27,2014-03-01 17:03,admin,admin,
221,127864,6764,35270,6640,0,N,N,N,CP_Drtn,TT_Task,DT_FixedDrtn,TK_NotStart,HHI.1475,Hold & Inspect Water for 24 Hours,,0,0,10,0,34.133333,34.133333,10,85.333334,0,85.333334,,,,2014-11-22 16:00,2014-11-23 16:00,,2014-11-22 16:00,2014-11-23 16:00,2014-11-22 16:00,2014-11-23 16:00,2014-11-22 16:00,2014-11-23 16:00,2014-11-22 16:00,2014-11-23 16:00,,PT_Normal,,,,,lOkCLD8qR+aGGUrkSPXyRg,23RRxnjoTXGDnjKXi0T7nw,,,Y,0,0,,,2014-02-17 15:27,2014-03-01 17:07,admin,admin,
222,127865,6764,35270,6640,0,N,N,N,CP_Drtn,TT_Task,DT_FixedDrtn,TK_NotStart,HHI.1476,Drain Water from Tank & Transfer to Deminarlized water Tanks 1&2,,0,0,190,0,80,80,190,85.333334,0,85.333334,,,,2014-11-23 16:00,2014-12-15 16:00,,2014-11-23 16:00,2014-12-15 16:00,2014-11-23 16:00,2014-12-15 16:00,2014-11-23 16:00,2014-12-15 16:00,2014-11-23 16:00,2014-12-15 16:00,,PT_Normal,,,,,90D0LpeVSFWrb6LF5uxTWw,7mdAmPHcQUe9UdxSZjAjoA,,,Y,0,0,,,2014-02-17 15:27,2014-03-01 17:08,admin,admin,
223,127866,6764,35270,6640,0,N,N,N,CP_Drtn,TT_Task,DT_FixedDrtn,TK_NotStart,HHI.1477,"Build Mobile Scaffolding,Internal CLeaning&Dismantling/Quailty Check",,0,0,50,0,25.6,25.6,50,42.666666,0,42.666666,,,,2014-12-15 16:00,2014-12-21 16:00,,2014-12-15 16:00,2014-12-21 16:00,2014-12-15 16:00,2014-12-21 16:00,2014-12-15 16:00,2014-12-21 16:00,2014-12-15 16:00,2014-12-21 16:00,,PT_Normal,,,,,tvUL3xJER4+8DZb815m2Bw,iQMokFFQQa+i3Ymk1rKZAg,,,Y,0,0,,,2014-02-17 15:27,2014-03-01 17:08,admin,admin,
224,127867,6764,35271,6640,0,N,N,N,CP_Drtn,TT_Task,DT_FixedDrtn,TK_NotStart,HHI.1467,Remove Stagging Blanks/Brackets & Install Blind Flanges,,450,450,20,0,105.6,105.6,20,42.666666,0,42.666666,,,,2014-09-09 11:00,2014-09-11 11:00,,2014-07-15 09:00,2014-07-19 11:00,2014-07-15 09:00,2014-07-19 11:00,2014-07-15 09:00,2014-07-19 11:00,2014-09-09 11:00,2014-09-11 11:00,,PT_Normal,,,,,i8/GYbJiSomOhw1xCv+VnQ,FCTsejdQSX+Ld8933NWwkA,,,N,0,0,,,2014-02-17 15:27,2014-03-01 17:06,admin,admin,
225,127868,6764,35271,6640,0,N,N,N,CP_Drtn,TT_Task,DT_FixedDrtn,TK_NotStart,HHI.1468,Tank Water Filling & Settlement from Service & Fire Water Tanks,,0,0,380,0,1407.999998,1407.999998,380,3002.666666,0,3002.666666,,,,2014-09-11 11:00,2014-10-28 16:00,,2014-09-11 11:00,2014-10-28 16:00,2014-09-11 11:00,2014-10-28 16:00,2014-09-11 11:00,2014-10-28 16:00,2014-09-11 11:00,2014-10-28 16:00,,PT_Normal,,,,,58gAVwdESX+4ll1kpO5L9w,Qps1H/PJT0i+BUZpEWmViw,,,Y,0,0,,,2014-02-17 15:27,2014-03-01 17:06,admin,admin,
226,127869,6764,35271,6640,0,N,N,N,CP_Drtn,TT_Task,DT_FixedDrtn,TK_NotStart,HHI.1469,Hold & Inspect Water for 24 Hours,,0,0,10,0,128.000001,128.000001,10,85.333333,0,85.333333,,,,2014-10-28 16:00,2014-10-29 16:00,,2014-10-28 16:00,2014-10-29 16:00,2014-10-28 16:00,2014-10-29 16:00,2014-10-28 16:00,2014-10-29 16:00,2014-10-28 16:00,2014-10-29 16:00,,PT_Normal,,,,,pMQUtbTTS/eLQ02G/L61xw,Shqbu+zrS8GOpOYwkVl4tQ,,,Y,0,0,,,2014-02-17 15:27,2014-03-01 17:03,admin,admin,
227,127870,6764,35271,6640,0,N,N,N,CP_Drtn,TT_Task,DT_FixedDrtn,TK_NotStart,HHI.1470,Drain Water from Tank & Transfer to Desanilated water Tank#2,,0,0,190,0,420.48,420.48,190,69.12,0,69.12,,,,2014-10-29 16:00,2014-11-20 16:00,,2014-10-29 16:00,2014-11-20 16:00,2014-10-29 16:00,2014-11-20 16:00,2014-10-29 16:00,2014-11-20 16:00,2014-10-29 16:00,2014-11-20 16:00,,PT_Normal,,,,,OOoykktFTLqia/YhLrLEOw,5i/W3QpVT0e1MbsRDIT0Yg,,,Y,0,0,,,2014-02-17 15:27,2014-03-01 17:07,admin,admin,
228,127871,6764,35271,6640,0,N,N,N,CP_Drtn,TT_Task,DT_FixedDrtn,TK_NotStart,HHI.1471,"Build Mobile Scaffolding,Internal CLeaning&Dismantling",,220,0,40,0,73.200001,73.200001,40,85.333334,0,85.333334,,,,2014-12-16 16:00,2014-12-21 16:00,,2014-11-20 16:00,2014-11-25 16:00,2014-11-20 16:00,2014-11-25 16:00,2014-11-20 16:00,2014-11-25 16:00,2014-12-16 16:00,2014-12-21 16:00,,PT_Normal,,,,,lsHf7sNlS7uARnGPWom9Gw,Xr6BSeDcTu2Vrcp5D6tioA,,,N,0,0,,,2014-02-17 15:27,2014-03-01 17:08,admin,admin,
229,127872,6764,35271,6640,0,N,N,N,CP_Drtn,TT_Task,DT_FixedDrtn,TK_NotStart,HHI.1472,Quailty Check,,220,0,10,0,50.666666,50.666666,10,42.666667,0,42.666667,,,,2014-12-21 16:00,2014-12-22 16:00,,2014-11-25 16:00,2014-11-26 16:00,2014-11-25 16:00,2014-11-26 16:00,2014-11-25 16:00,2014-11-26 16:00,2014-12-21 16:00,2014-12-22 16:00,,PT_Normal,,,,,3JkRUeM3RjCZVNZ8P6aj5g,p4fVhhUlRYqe+kNyXTP1zA,,,N,0,0,,,2014-02-17 15:27,2014-03-01 17:08,admin,admin,
230,127873,6764,35273,6640,0,N,N,N,CP_Drtn,TT_Task,DT_FixedDrtn,TK_NotStart,HHI.1492,Perform Roof Surface Preparation & Painting,,10,0,40,0,288,288,40,96,0,96,,,,2014-12-28 16:00,2015-01-01 16:00,,2014-12-27 16:00,2014-12-31 16:00,2014-12-27 16:00,2014-12-31 16:00,2014-12-27 16:00,2014-12-31 16:00,2014-12-28 16:00,2015-01-01 16:00,,PT_Normal,,,,,JP95WstyTDK0e+k0Wd0ZKA,8lIQEszWTWyhHn1H9K2pZA,,,N,0,0,,,2014-02-17 15:27,2014-03-01 17:08,admin,admin,
231,127874,6764,35273,6640,0,N,N,N,CP_Drtn,TT_Task,DT_FixedDrtn,TK_NotStart,HHI.1491,Perform Shell Surface Preparation & Painting,,0,0,50,0,280,280,50,80,0,80,,,,2014-12-21 16:00,2014-12-27 16:00,,2014-12-21 16:00,2014-12-27 16:00,2014-12-21 16:00,2014-12-27 16:00,2014-12-21 16:00,2014-12-27 16:00,2014-12-21 16:00,2014-12-27 16:00,,PT_Normal,,,,,IiSzEzkRS1uyjsqwxx4fzw,eCUXkM9PQRmsxXomxbZ0mg,,,Y,0,0,,,2014-02-17 15:27,2014-03-01 17:08,admin,admin,
232,127875,6764,35273,6640,0,N,N,N,CP_Drtn,TT_Task,DT_FixedDrtn,TK_NotStart,HHI.1493,Quailty Check,,10,10,90,0,285.48,285.48,90,351.36,0,351.36,,,,2014-12-22 16:00,2015-01-01 16:00,,2014-12-21 16:00,2014-12-31 16:00,2014-12-21 16:00,2014-12-31 16:00,2014-12-21 16:00,2014-12-31 16:00,2014-12-22 16:00,2015-01-01 16:00,,PT_Normal,,,,,3vQtNomSQn24va2C1ambcQ,tTvusFLqTSaxDR/HdpCHWQ,,,N,0,0,,,2014-02-17 15:27,2014-03-01 17:08,admin,admin,
233,127876,6764,35274,6640,0,N,N,N,CP_Drtn,TT_Task,DT_FixedDrtn,TK_NotStart,HHI.1499,Quailty Check (including Holiday Test),,0,0,270,0,103.009524,103.009524,270,515.04762,0,515.04762,,,,2015-01-03 16:00,2015-02-03 16:00,,2015-01-03 16:00,2015-02-03 16:00,2015-01-03 16:00,2015-02-03 16:00,2015-01-03 16:00,2015-02-03 16:00,2015-01-03 16:00,2015-02-03 16:00,,PT_Normal,,,,,T2X2g5vZRZWF82JSnZty1w,/Ya8wZ1IT4O2Y54v95J7OQ,,,Y,0,0,,,2014-02-17 15:27,2014-03-01 17:08,admin,admin,
234,127877,6764,35274,6640,0,N,N,N,CP_Drtn,TT_Task,DT_FixedDrtn,TK_NotStart,HHI.1495,Perform Roof Underside Surface Preparation & Painting,,0,0,80,0,1133.104762,1133.104762,80,206.019048,0,206.019048,,,,2015-01-01 16:00,2015-01-11 16:00,,2015-01-01 16:00,2015-01-11 16:00,2015-01-01 16:00,2015-01-11 16:00,2015-01-01 16:00,2015-01-11 16:00,2015-01-01 16:00,2015-01-11 16:00,,PT_Normal,,,,,uRrrzy4wQ3Ge0f0kQlNfXw,+xvbCV90TziEY0xSVIWBcA,,,Y,0,0,,,2014-02-17 15:27,2014-03-01 17:08,admin,admin,
235,127878,6764,35274,6640,0,N,N,N,CP_Drtn,TT_Task,DT_FixedDrtn,TK_NotStart,HHI.1498,Perform Bottom Surface Preparation & Painting,,0,0,50,0,0,0,50,0,0,0,,,,2015-01-28 16:00,2015-02-03 16:00,,2015-01-28 16:00,2015-02-03 16:00,2015-01-28 16:00,2015-02-03 16:00,2015-01-28 16:00,2015-02-03 16:00,2015-01-28 16:00,2015-02-03 16:00,,PT_Normal,,,,,o0/rTM+YQC6Vcam2M9QP8A,gvs+9YRw8k2SvcG5xAtYLQ,,,Y,0,0,,,2014-02-17 15:27,2014-03-01 17:08,admin,admin,
236,127879,6764,35274,6640,0,N,N,N,CP_Drtn,TT_Task,DT_FixedDrtn,TK_NotStart,HHI.1496,Perform Shell course Surface Preparation & Painting,,0,0,100,0,0,0,100,0,0,0,,,,2015-01-11 16:00,2015-01-22 16:00,,2015-01-11 16:00,2015-01-22 16:00,2015-01-11 16:00,2015-01-22 16:00,2015-01-11 16:00,2015-01-22 16:00,2015-01-11 16:00,2015-01-22 16:00,,PT_Normal,,,,,Aaq+/mroSFqazoMuRMndEw,ijZ1dp/tK0eZ20D+JBP09g,,,Y,0,0,,,2014-02-17 15:27,2014-03-01 17:08,admin,admin,
237,127880,6764,35274,6640,0,N,N,N,CP_Drtn,TT_Task,DT_FixedDrtn,TK_NotStart,HHI.1494,Install Scaffoldings,,0,0,100,0,0,0,100,0,0,0,,,,2014-12-21 16:00,2015-01-01 16:00,,2014-12-21 16:00,2015-01-01 16:00,2014-12-21 16:00,2015-01-01 16:00,2014-12-21 16:00,2015-01-01 16:00,2014-12-21 16:00,2015-01-01 16:00,,PT_Normal,,,,,eoiyDILlQUaTwtEpzklFhA,vJCOT90M0UeGfdwvgVjfFw,,,Y,0,0,,,2014-02-17 15:27,2014-03-01 17:08,admin,admin,
238,127881,6764,35274,6640,0,N,N,N,CP_Drtn,TT_Task,DT_FixedDrtn,TK_NotStart,HHI.1497,Dismantle Scaffoldings,,0,0,50,0,0,0,50,0,0,0,,,,2015-01-22 16:00,2015-01-28 16:00,,2015-01-22 16:00,2015-01-28 16:00,2015-01-22 16:00,2015-01-28 16:00,2015-01-22 16:00,2015-01-28 16:00,2015-01-22 16:00,2015-01-28 16:00,,PT_Normal,,,,,8mtVJps0SHWAbwS5q68Dgw,pUaLsMhLi0SY/WVus7Cl3A,,,Y,0,0,,,2014-02-17 15:27,2014-03-01 17:08,admin,admin,
239,127882,6764,35276,6640,0,N,N,N,CP_Drtn,TT_Task,DT_FixedDrtn,TK_NotStart,HHI.1481,Install Name Plate/Attachments on shell Course #1,,0,0,10,0,51.199998,51.199998,10,42.666667,0,42.666667,,,,2014-12-20 16:00,2014-12-21 16:00,,2014-12-20 16:00,2014-12-21 16:00,2014-12-20 16:00,2014-12-21 16:00,2014-12-20 16:00,2014-12-21 16:00,2014-12-20 16:00,2014-12-21 16:00,,PT_Normal,,,,,8bzoQW+1RMe0VaWe2a2Lrw,r1rg5O8uRjG6/tPmgpcR/w,,,Y,0,0,,,2014-02-17 15:27,2014-03-01 17:08,admin,admin,
240,127883,6764,35277,6640,0,N,N,N,CP_Drtn,TT_Task,DT_FixedDrtn,TK_NotStart,HHI.1480,Install Name Plate/Attachments on shell Course #1,,220,0,10,0,17.066666,17.066666,10,42.666666,0,42.666666,,,,2014-12-21 16:00,2014-12-22 16:00,,2014-11-25 16:00,2014-11-26 16:00,2014-11-25 16:00,2014-11-26 16:00,2014-11-25 16:00,2014-11-26 16:00,2014-12-21 16:00,2014-12-22 16:00,,PT_Normal,,,,,G/okWV8NQe+/PhlLCwwdKA,YDGRwxfaQyGRnCF0Astepw,,,N,0,0,,,2014-02-17 15:27,2014-03-01 17:08,admin,admin,
241,127884,6764,35278,6640,0,N,N,N,CP_Drtn,TT_Task,DT_FixedDrtn,TK_NotStart,HHI.1784,AZ Handovers Area to Client,,0,0,10,0,0,0,10,0,0,0,,,,2015-02-05 16:00,2015-02-07 16:00,,2015-02-05 16:00,2015-02-07 16:00,2015-02-05 16:00,2015-02-07 16:00,2015-02-05 16:00,2015-02-07 16:00,2015-02-05 16:00,2015-02-07 16:00,,PT_Normal,,,,,hFQTVXChTKK/GvNHeHPA2g,,,,Y,0,0,,,2014-02-17 15:27,2014-03-01 17:08,admin,admin,
242,127885,6764,35280,6640,0,N,N,N,CP_Drtn,TT_Mile,DT_FixedDrtn,TK_NotStart,HHI.1504,HHI Hand over Tank#1(10GHE11BB001) Foundation  to AZ,,0,0,0,0,0,0,0,0,0,0,2014-03-01 07:00,,,2014-03-01 07:00,2014-03-01 07:00,,2014-03-01 07:00,2014-03-01 07:00,2014-03-01 07:00,2014-03-01 07:00,2014-03-01 07:00,2014-03-01 07:00,2014-03-01 07:00,2014-03-01 07:00,CS_MSO,PT_Normal,,,,,NLCl9PMpScyEgaJL5EI2nA,cRXIe/3Eb0+WYpwfYmKuQg,,,N,0,0,,,2014-02-17 15:27,2014-03-01 14:49,admin,admin,
243,127886,6764,35280,6640,0,N,N,N,CP_Drtn,TT_Task,DT_FixedDrtn,TK_NotStart,HHI.1505,AZ Check Tank#1 Foundation Levelness prior to Mechanical Works,,490,0,10,0,0,0,10,0,0,0,,,,2014-04-27 07:00,2014-04-27 17:00,,2014-03-01 07:00,2014-03-01 17:00,2014-03-01 07:00,2014-03-01 17:00,2014-03-01 07:00,2014-03-01 17:00,2014-04-27 07:00,2014-04-27 17:00,,PT_Normal,,,,,QWzIXPmDTFuDQRir1cLADw,JgJ3x58R+kiMjQ+4H8AKjg,,,N,0,0,,,2014-02-17 15:27,2014-03-01 17:09,admin,admin,
244,127887,6764,35280,6640,0,N,N,N,CP_Drtn,TT_Mile,DT_FixedDrtn,TK_NotStart,HHI.1506,HHI Hand over Tank#2(10GHE12BB001) Foundation to AZ,,450,0,0,0,0,0,0,0,0,0,,,,2014-05-04 07:00,2014-05-04 07:00,,2014-03-12 07:00,2014-03-12 07:00,2014-03-12 07:00,2014-03-12 07:00,2014-03-12 07:00,2014-03-12 07:00,2014-05-04 07:00,2014-05-04 07:00,,PT_Normal,,,,,9kU68/KMTemHp/tcGkD1XA,u5yRzo6ng0i57qVZ+k8HVA,,,N,0,0,,,2014-02-17 15:27,2014-03-01 17:09,admin,admin,
245,127888,6764,35280,6640,0,N,N,N,CP_Drtn,TT_Task,DT_FixedDrtn,TK_NotStart,HHI.1507,AZ Check Tank#2 Foundation Levelness prior to Mechanical Works,,450,0,10,0,0,0,10,0,0,0,,,,2014-05-04 07:00,2014-05-04 17:00,,2014-03-12 07:00,2014-03-12 17:00,2014-03-12 07:00,2014-03-12 17:00,2014-03-12 07:00,2014-03-12 17:00,2014-05-04 07:00,2014-05-04 17:00,,PT_Normal,,,,,3Pv5X0pAS1Gyf9pBzxgHPw,FBVc8tH3tkyx7oCkW9Cxjg,,,N,0,0,,,2014-02-17 15:27,2014-03-01 17:09,admin,admin,
246,127889,6764,35283,6640,0,N,N,N,CP_Drtn,TT_Task,DT_FixedDrtn,TK_NotStart,HHI.1665,"Fit,Weld Nozzle on Shell",,450,0,10,0,0,0,10,0,0,0,,,,2014-09-18 16:00,2014-09-20 16:00,,2014-08-01 13:30,2014-08-02 16:00,2014-08-01 13:30,2014-08-02 16:00,2014-08-01 13:30,2014-08-02 16:00,2014-09-18 16:00,2014-09-20 16:00,,PT_Normal,,,,,Efsce7DPSOy69xDg6CCuxQ,fbldQ+V3kkeOO57Zn+YcKg,,,N,0,0,,,2014-02-17 15:27,2014-03-01 17:09,admin,admin,
247,127890,6764,35283,6640,0,N,N,N,CP_Drtn,TT_Task,DT_FixedDrtn,TK_NotStart,HHI.1658,Erect & Tack Shell Course # 7 & Internal Stagging Brackets,,450,0,10,0,400,400,10,48,0,48,,,,2014-09-12 13:30,2014-09-13 16:00,,2014-07-21 09:00,2014-07-22 13:00,2014-07-21 09:00,2014-07-22 13:00,2014-07-21 09:00,2014-07-22 13:00,2014-09-12 13:30,2014-09-13 16:00,,PT_Normal,,,,,xkCmvMQ4SROFxNcdT41HFA,QX/248gwrUqHflvOqq0LRA,,,N,0,0,,,2014-02-17 15:27,2014-03-01 17:09,admin,admin,
248,127891,6764,35283,6640,0,N,N,N,CP_Drtn,TT_Task,DT_FixedDrtn,TK_NotStart,HHI.1659,Weld Outer Vertical Seam /Install the Stairways support on Shell,,450,0,10,0,181.333332,181.333332,10,42.666666,0,42.666666,,,,2014-09-13 16:00,2014-09-14 16:00,,2014-07-22 13:00,2014-07-24 11:00,2014-07-22 13:00,2014-07-24 11:00,2014-07-22 13:00,2014-07-24 11:00,2014-09-13 16:00,2014-09-14 16:00,,PT_Normal,,,,,yKcyb62BQM2MIi6+GGs4jQ,t/aTCletXUiZ+/C8xt3HWQ,,,N,0,0,,,2014-02-17 15:27,2014-03-01 17:09,admin,admin,
249,127892,6764,35283,6640,0,N,N,N,CP_Drtn,TT_Task,DT_FixedDrtn,TK_NotStart,HHI.1660,Backgouge & NDT Inside Vertical Seam,,450,0,10,0,101.333332,101.333332,10,42.666666,0,42.666666,,,,2014-09-14 16:00,2014-09-15 16:00,,2014-07-24 11:00,2014-07-26 15:00,2014-07-24 11:00,2014-07-26 15:00,2014-07-24 11:00,2014-07-26 15:00,2014-09-14 16:00,2014-09-15 16:00,,PT_Normal,,,,,CIVxxZeoT3SC3CGK/rq0NA,XRhI8HEMa0OXRr6h+8ni8g,,,N,0,0,,,2014-02-17 15:27,2014-03-01 17:09,admin,admin,
250,127893,6764,35283,6640,0,N,N,N,CP_Drtn,TT_Task,DT_FixedDrtn,TK_NotStart,HHI.1661,Weld Inside Vertical Seam,,450,0,10,0,191.999998,191.999998,10,42.666666,0,42.666666,,,,2014-09-15 16:00,2014-09-16 16:00,,2014-07-27 09:00,2014-07-30 11:00,2014-07-27 09:00,2014-07-30 11:00,2014-07-27 09:00,2014-07-30 11:00,2014-09-15 16:00,2014-09-16 16:00,,PT_Normal,,,,,KDqsRZ6/STOQXHP98ioQ4w,KkFfP52C0EWjcgdNZVQt1w,,,N,0,0,,,2014-02-17 15:27,2014-03-01 17:09,admin,admin,
251,127894,6764,35283,6640,0,N,N,N,CP_Drtn,TT_Task,DT_FixedDrtn,TK_NotStart,HHI.1662,"""""Weld Outer Horizontal Seam between Shell Course # 6 & 7",,450,0,10,0,405.333336,405.333336,10,85.333333,0,85.333333,,,,2014-09-16 16:00,2014-09-17 16:00,,2014-07-30 11:00,2014-07-31 11:00,2014-07-30 11:00,2014-07-31 11:00,2014-07-30 11:00,2014-07-31 11:00,2014-09-16 16:00,2014-09-17 16:00,,PT_Normal,,,,,HHg54JDfRJi5FQVa9EA19w,IoakFKiJRUyxsO+j8GLimA,,,N,0,0,,,2014-02-17 15:27,2014-03-01 17:09,admin,admin,
252,127895,6764,35283,6640,0,N,N,N,CP_Drtn,TT_Task,DT_FixedDrtn,TK_NotStart,HHI.1663,"""""Backgouge & NDT Inside Horizontal Seam between Shell Course# 6 & 7",,450,0,10,0,108.444444,108.444444,10,33.066667,0,33.066667,,,,2014-09-17 16:00,2014-09-18 16:00,,2014-07-31 11:00,2014-08-01 13:30,2014-07-31 11:00,2014-08-01 13:30,2014-07-31 11:00,2014-08-01 13:30,2014-09-17 16:00,2014-09-18 16:00,,PT_Normal,,,,,D/1ZG1teQ6eT2hHI6joMCA,kbsz4lZ8c0yA0hlUYpMxfA,,,N,0,0,,,2014-02-17 15:27,2014-03-01 17:09,admin,admin,
253,127896,6764,35283,6640,0,N,N,N,CP_Drtn,TT_Task,DT_FixedDrtn,TK_NotStart,HHI.1664,Weld Inner Horizontal Seam between Shell Course # 6 & 7,,450,0,10,0,202.666668,202.666668,10,85.333333,0,85.333333,,,,2014-09-18 16:00,2014-09-20 16:00,,2014-08-01 13:30,2014-08-02 16:00,2014-08-01 13:30,2014-08-02 16:00,2014-08-01 13:30,2014-08-02 16:00,2014-09-18 16:00,2014-09-20 16:00,,PT_Normal,,,,,f7TV4UBmQMey7BJi556SjA,gwfgMSJO70uTSAnRstDZjw,,,N,0,0,,,2014-02-17 15:27,2014-03-01 17:09,admin,admin,
254,127897,6764,35283,6640,0,N,N,N,CP_Drtn,TT_Task,DT_FixedDrtn,TK_NotStart,HHI.1666,"Quailty Check(Visual Inspection,PT,Air Leak Test for Shell Nozzle)",,450,0,60,0,34.222222,34.222222,60,33.066667,0,33.066667,,,,2014-09-13 16:00,2014-09-20 16:00,,2014-07-22 13:00,2014-08-02 16:00,2014-07-22 13:00,2014-08-02 16:00,2014-07-22 13:00,2014-08-02 16:00,2014-09-13 16:00,2014-09-20 16:00,,PT_Normal,,,,,j8Zgn2lfRGOuwxRJpZdEOA,nfdokaSBAEycU3V5Clg2eA,,,N,0,0,,,2014-02-17 15:27,2014-03-01 17:09,admin,admin,
255,127898,6764,35284,6640,0,N,N,N,CP_Drtn,TT_Task,DT_FixedDrtn,TK_NotStart,HHI.1667,Erect & Tack Wind Girder,,450,0,10,0,276.888892,276.888892,10,11.377778,0,11.377778,,,,2014-09-20 16:00,2014-09-21 16:00,,2014-08-02 16:00,2014-08-03 16:00,2014-08-02 16:00,2014-08-03 16:00,2014-08-02 16:00,2014-08-03 16:00,2014-09-20 16:00,2014-09-21 16:00,,PT_Normal,,,,,RhRqK44GT3G6cDyDEwIOJw,W0VDrx5zL0O+CuDm0AjsLA,,,N,0,0,,,2014-02-17 15:27,2014-03-01 17:09,admin,admin,
256,127899,6764,35284,6640,0,N,N,N,CP_Drtn,TT_Task,DT_FixedDrtn,TK_NotStart,HHI.1668,Weld Wind Girder,,450,0,20,0,608.000004,608.000004,20,85.333333,0,85.333333,,,,2014-09-21 16:00,2014-09-24 16:00,,2014-08-03 16:00,2014-08-05 16:00,2014-08-03 16:00,2014-08-05 16:00,2014-08-03 16:00,2014-08-05 16:00,2014-09-21 16:00,2014-09-24 16:00,,PT_Normal,,,,,8BHCbyuIRAS54yRB3bfg7g,Cex1l01ELEe1CGf2F+EtLQ,,,N,0,0,,,2014-02-17 15:27,2014-03-01 17:09,admin,admin,
257,127900,6764,35284,6640,0,N,N,N,CP_Drtn,TT_Task,DT_FixedDrtn,TK_NotStart,HHI.1669,Quailty Check(Visual Inspection & PT),,450,0,30,0,0,0,30,0,0,0,,,,2014-09-20 16:00,2014-09-24 16:00,,2014-08-02 16:00,2014-08-05 16:00,2014-08-02 16:00,2014-08-05 16:00,2014-08-02 16:00,2014-08-05 16:00,2014-09-20 16:00,2014-09-24 16:00,,PT_Normal,,,,,c7D7N5mLSNGn2HQp6OSamw,Nx0O2WTsaE6Rv41pm1iwJg,,,N,0,0,,,2014-02-17 15:27,2014-03-01 17:09,admin,admin,
258,127901,6764,35285,6640,0,N,N,N,CP_Drtn,TT_Task,DT_FixedDrtn,TK_NotStart,HHI.1674,"""""Weld Outer Horizontal Seam between Shell Course # 6 & 7",,450,0,10,0,405.333336,405.333336,10,85.333333,0,85.333333,,,,2014-09-28 16:00,2014-09-29 16:00,,2014-08-09 11:00,2014-08-10 11:00,2014-08-09 11:00,2014-08-10 11:00,2014-08-09 11:00,2014-08-10 11:00,2014-09-28 16:00,2014-09-29 16:00,,PT_Normal,,,,,KfqNUiQVTYGfh147txv23A,P4rQfWq6SEyJ8aH/z/YP+w,,,N,0,0,,,2014-02-17 15:27,2014-03-01 17:09,admin,admin,
259,127902,6764,35285,6640,0,N,N,N,CP_Drtn,TT_Task,DT_FixedDrtn,TK_NotStart,HHI.1675,"""""Backgouge & NDT Inside Horizontal Seam between Shell Course# 6 & 7",,450,0,10,0,108.444444,108.444444,10,33.066667,0,33.066667,,,,2014-09-29 16:00,2014-09-30 16:00,,2014-08-10 11:00,2014-08-11 11:00,2014-08-10 11:00,2014-08-11 11:00,2014-08-10 11:00,2014-08-11 11:00,2014-09-29 16:00,2014-09-30 16:00,,PT_Normal,,,,,+P2VRfMwSBeYZ/olzDhBBg,ehKZz8Hcj0WD1NBef6oyew,,,N,0,0,,,2014-02-17 15:27,2014-03-01 17:09,admin,admin,
260,127903,6764,35285,6640,0,N,N,N,CP_Drtn,TT_Task,DT_FixedDrtn,TK_NotStart,HHI.1676,Weld Inner Horizontal Seam between Shell Course # 6 & 7,,450,0,10,0,202.666668,202.666668,10,85.333333,0,85.333333,,,,2014-09-30 16:00,2014-10-01 16:00,,2014-08-11 11:00,2014-08-12 11:00,2014-08-11 11:00,2014-08-12 11:00,2014-08-11 11:00,2014-08-12 11:00,2014-09-30 16:00,2014-10-01 16:00,,PT_Normal,,,,,MRfqcvb2R5aFpAhrsR9Pvg,Nt8SNANrckOWrkmihX2PaA,,,N,0,0,,,2014-02-17 15:27,2014-03-01 17:09,admin,admin,
261,127904,6764,35285,6640,0,N,N,N,CP_Drtn,TT_Task,DT_FixedDrtn,TK_NotStart,HHI.1678,"Quailty Check(Visual Inspection,PT,Air Leak Test for Shell Nozzle)",,450,0,60,0,27.111111,27.111111,60,33.066667,0,33.066667,,,,2014-09-25 16:00,2014-10-02 16:00,,2014-08-06 16:00,2014-08-13 11:00,2014-08-06 16:00,2014-08-13 11:00,2014-08-06 16:00,2014-08-13 11:00,2014-09-25 16:00,2014-10-02 16:00,,PT_Normal,,,,,vNlmEE0SS52hJxefw1YCVw,oMjkAU+dx0a7+D1b/TUMdQ,,,N,0,0,,,2014-02-17 15:27,2014-03-01 17:09,admin,admin,
262,127905,6764,35285,6640,0,N,N,N,CP_Drtn,TT_Task,DT_FixedDrtn,TK_NotStart,HHI.1677,"Fit,Weld Nozzle on Shell",,450,0,10,0,0,0,10,0,0,0,,,,2014-10-01 16:00,2014-10-02 16:00,,2014-08-12 11:00,2014-08-13 11:00,2014-08-12 11:00,2014-08-13 11:00,2014-08-12 11:00,2014-08-13 11:00,2014-10-01 16:00,2014-10-02 16:00,,PT_Normal,,,,,KpVDKjKIS8+B3zZHqxxokg,fbldQ+V3kkeOO57Zn+YcKg,,,N,0,0,,,2014-02-17 15:27,2014-03-01 17:09,admin,admin,
263,127906,6764,35285,6640,0,N,N,N,CP_Drtn,TT_Task,DT_FixedDrtn,TK_NotStart,HHI.1670,Erect & Tack Shell Course # 7 & Install Stagging Brackets,,450,0,10,0,380,380,10,48,0,48,,,,2014-09-22 16:00,2014-09-24 16:00,,2014-08-04 16:00,2014-08-05 16:00,2014-08-04 16:00,2014-08-05 16:00,2014-08-04 16:00,2014-08-05 16:00,2014-09-22 16:00,2014-09-24 16:00,,PT_Normal,,,,,GSRn7Xl/TRefjnQd5GkRUQ,j7+wBJGPkUKSeZtc8CXukw,,,N,0,0,,,2014-02-17 15:27,2014-03-01 17:09,admin,admin,
264,127907,6764,35285,6640,0,N,N,N,CP_Drtn,TT_Task,DT_FixedDrtn,TK_NotStart,HHI.1671,Weld Outer Vertical Seam /Install the Stairways support on Shell,,450,0,10,0,160,160,10,42.666666,0,42.666666,,,,2014-09-24 16:00,2014-09-25 16:00,,2014-08-05 16:00,2014-08-06 16:00,2014-08-05 16:00,2014-08-06 16:00,2014-08-05 16:00,2014-08-06 16:00,2014-09-24 16:00,2014-09-25 16:00,,PT_Normal,,,,,IaM3/kFxT7KFWgl7qw73dw,Ywii8SQ6TUSR0/7zF3oMLQ,,,N,0,0,,,2014-02-17 15:27,2014-03-01 17:09,admin,admin,
265,127908,6764,35285,6640,0,N,N,N,CP_Drtn,TT_Task,DT_FixedDrtn,TK_NotStart,HHI.1672,Backgouge & NDT Inside Vertical Seam,,450,0,10,0,101.333332,101.333332,10,42.666666,0,42.666666,,,,2014-09-25 16:00,2014-09-27 16:00,,2014-08-06 16:00,2014-08-07 16:00,2014-08-06 16:00,2014-08-07 16:00,2014-08-06 16:00,2014-08-07 16:00,2014-09-25 16:00,2014-09-27 16:00,,PT_Normal,,,,,BtJFyYcfThqs21F2thnwmg,P+z0D6ucMEaXM8rXtcjHLw,,,N,0,0,,,2014-02-17 15:27,2014-03-01 17:09,admin,admin,
266,127909,6764,35285,6640,0,N,N,N,CP_Drtn,TT_Task,DT_FixedDrtn,TK_NotStart,HHI.1673,Weld Inside Vertical Seam,,450,0,10,0,160,160,10,42.666666,0,42.666666,,,,2014-09-27 16:00,2014-09-28 16:00,,2014-08-07 16:00,2014-08-09 11:00,2014-08-07 16:00,2014-08-09 11:00,2014-08-07 16:00,2014-08-09 11:00,2014-09-27 16:00,2014-09-28 16:00,,PT_Normal,,,,,8eBQe52IS0KFacn55jOE7g,9Ef3cSFTYkKg8F/6rYNSQw,,,N,0,0,,,2014-02-17 15:27,2014-03-01 17:09,admin,admin,
267,127910,6764,35286,6640,0,N,N,N,CP_Drtn,TT_Task,DT_FixedDrtn,TK_NotStart,HHI.1682,Perform RT for Tank#1 & #2,,450,0,10,0,0,0,10,0,0,0,,,,2014-10-08 16:00,2014-10-09 16:00,,2014-08-16 16:00,2014-08-17 16:00,2014-08-16 16:00,2014-08-17 16:00,2014-08-16 16:00,2014-08-17 16:00,2014-10-08 16:00,2014-10-09 16:00,,PT_Normal,,,,,aN5JzHJ+S6SWkUZVvpezyQ,ez/0cVx7D0286dR2nOyvog,,,N,0,0,,,2014-02-17 15:27,2014-03-01 17:09,admin,admin,
268,127911,6764,35287,6640,0,N,N,N,CP_Drtn,TT_Task,DT_FixedDrtn,TK_NotStart,HHI.1679,Erect & Tack Wind Girder,,450,0,10,0,262.666669,262.666669,10,11.377778,0,11.377778,,,,2014-10-02 16:00,2014-10-06 16:00,,2014-08-13 11:00,2014-08-14 11:00,2014-08-13 11:00,2014-08-14 11:00,2014-08-13 11:00,2014-08-14 11:00,2014-10-02 16:00,2014-10-06 16:00,,PT_Normal,,,,,RmUEQ7YlS6SlEITyAbSIOw,6Q/r8+MVbkCnpR8ah8wZrQ,,,N,0,0,,,2014-02-17 15:27,2014-03-01 17:09,admin,admin,
269,127912,6764,35287,6640,0,N,N,N,CP_Drtn,TT_Task,DT_FixedDrtn,TK_NotStart,HHI.1680,Weld Wind Girder,,450,0,20,0,576.000003,576.000003,20,85.333334,0,85.333334,,,,2014-10-06 16:00,2014-10-08 16:00,,2014-08-14 11:00,2014-08-16 16:00,2014-08-14 11:00,2014-08-16 16:00,2014-08-14 11:00,2014-08-16 16:00,2014-10-06 16:00,2014-10-08 16:00,,PT_Normal,,,,,KjOBGbboQGqg+xqoWxoGuQ,lf2z5A+bTU6uGcuoNA32QA,,,N,0,0,,,2014-02-17 15:27,2014-03-01 17:09,admin,admin,
270,127913,6764,35287,6640,0,N,N,N,CP_Drtn,TT_Task,DT_FixedDrtn,TK_NotStart,HHI.1681,Quailty Check(Visual Inspection & PT),,450,0,30,0,0,0,30,0,0,0,,,,2014-10-02 16:00,2014-10-08 16:00,,2014-08-13 11:00,2014-08-16 16:00,2014-08-13 11:00,2014-08-16 16:00,2014-08-13 11:00,2014-08-16 16:00,2014-10-02 16:00,2014-10-08 16:00,,PT_Normal,,,,,VEK6VS2jS6uM1qe58MkaVw,35yx49RN+UOclERmOzxBuA,,,N,0,0,,,2014-02-17 15:27,2014-03-01 17:09,admin,admin,
271,127914,6764,35289,6640,0,N,N,N,CP_Drtn,TT_Task,DT_FixedDrtn,TK_NotStart,HHI.1632,Erect & Tack Columns,,520,70,20,0,1680,1680,20,48,0,48,,,,2014-08-31 16:00,2014-09-02 16:00,,2014-06-21 07:00,2014-06-22 17:00,2014-06-21 07:00,2014-06-22 17:00,2014-06-21 07:00,2014-06-22 17:00,2014-08-31 16:00,2014-09-02 16:00,,PT_Normal,,,,,2R2sq0jpRQiIAiiXKabyeA,oeHEWELIwUK+3TOApE6zkA,,,N,0,0,,,2014-02-17 15:27,2014-03-01 17:09,admin,admin,
272,127915,6764,35290,6640,0,N,N,N,CP_Drtn,TT_Task,DT_FixedDrtn,TK_NotStart,HHI.1631,Erect & Tack Columns,,450,0,20,0,1680,1680,20,48,0,48,,,,2014-08-21 16:00,2014-08-24 11:00,,2014-06-18 07:00,2014-06-19 17:00,2014-06-18 07:00,2014-06-19 17:00,2014-06-18 07:00,2014-06-19 17:00,2014-08-21 16:00,2014-08-24 11:00,,PT_Normal,,,,,H0PTPoqTRx2hAVTNlNThZA,PktqssTQj0extatsYw3dWA,,,N,0,0,,,2014-02-17 15:27,2014-03-01 17:09,admin,admin,
273,127916,6764,35292,6640,0,N,N,N,CP_Drtn,TT_Task,DT_FixedDrtn,TK_NotStart,HHI.1723,"""""Fit & Tack 
Shell Course # 8 & Compression Ring",,450,0,20,0,255.999999,255.999999,20,8.533333,0,8.533333,,,,2014-11-18 16:00,2014-11-20 16:00,,2014-09-24 16:00,2014-09-27 16:00,2014-09-24 16:00,2014-09-27 16:00,2014-09-24 16:00,2014-09-27 16:00,2014-11-18 16:00,2014-11-20 16:00,,PT_Normal,,,,,3plDnfraQY+B152YA4yg4w,gDeSWU6rEESeRwdwLeYLcA,,,N,0,0,,,2014-02-17 15:27,2014-03-01 17:09,admin,admin,
274,127917,6764,35292,6640,0,N,N,N,CP_Drtn,TT_Task,DT_FixedDrtn,TK_NotStart,HHI.1724,Weld Outer Horizontal Seam between Shell Course # 8 & Top Curb Angle,,460,0,10,0,128,128,10,33.066667,0,33.066667,,,,2014-11-22 16:00,2014-11-23 16:00,,2014-09-27 16:00,2014-09-28 16:00,2014-09-27 16:00,2014-09-28 16:00,2014-09-27 16:00,2014-09-28 16:00,2014-11-22 16:00,2014-11-23 16:00,,PT_Normal,,,,,DVLDnAwRQ+mgjLV6WdL7jg,8KHAwqn5ZkOP0uEgLWrDEw,,,N,0,0,,,2014-02-17 15:27,2014-03-01 17:09,admin,admin,
275,127918,6764,35292,6640,0,N,N,N,CP_Drtn,TT_Task,DT_FixedDrtn,TK_NotStart,HHI.1725,"""""Backgouge & NDT Inside Horizontal Seam between Shell Course# 8 & Top Curb Angle",,460,10,10,0,90,90,10,33.066667,0,33.066667,,,,2014-11-22 16:00,2014-11-23 16:00,,2014-09-27 16:00,2014-09-28 16:00,2014-09-27 16:00,2014-09-28 16:00,2014-09-27 16:00,2014-09-28 16:00,2014-11-22 16:00,2014-11-23 16:00,,PT_Normal,,,,,h1s/NnDuTKiTXrpzqAVFOw,sw/0zt6LSkKuzIJCNSufKg,,,N,0,0,,,2014-02-17 15:27,2014-03-01 17:09,admin,admin,
276,127919,6764,35292,6640,0,N,N,N,CP_Drtn,TT_Task,DT_FixedDrtn,TK_NotStart,HHI.1727,Weld Inner Horizontal Seam between Shell Course #8 & Top Curb Angle,,450,0,10,0,191.333334,191.333334,10,33.066667,0,33.066667,,,,2014-11-23 16:00,2014-11-24 16:00,,2014-09-29 16:00,2014-09-30 16:00,2014-09-29 16:00,2014-09-30 16:00,2014-09-29 16:00,2014-09-30 16:00,2014-11-23 16:00,2014-11-24 16:00,,PT_Normal,,,,,si9aDvn+RVGjF4F+LhUgtg,Jam579LsakOj50bSIyKnBA,,,N,0,0,,,2014-02-17 15:27,2014-03-01 17:09,admin,admin,
277,127920,6764,35292,6640,0,N,N,N,CP_Drtn,TT_Task,DT_FixedDrtn,TK_NotStart,HHI.1729,Quailty Check (Visual Inspection),,450,0,50,0,42.666664,42.666664,50,42.666667,0,42.666667,,,,2014-11-18 16:00,2014-11-24 16:00,,2014-09-24 16:00,2014-09-30 16:00,2014-09-24 16:00,2014-09-30 16:00,2014-09-24 16:00,2014-09-30 16:00,2014-11-18 16:00,2014-11-24 16:00,,PT_Normal,,,,,zsDKOHa9RPqJTqY+bqsqeQ,a3Ar96sexECjudDPNLYhgw,,,N,0,0,,,2014-02-17 15:27,2014-03-01 17:09,admin,admin,
278,127921,6764,35292,6640,0,N,N,N,CP_Drtn,TT_Task,DT_FixedDrtn,TK_NotStart,HHI.1726,"Fit up,Tack of Gusset Plates to Shell",,450,0,20,0,341.333337,341.333337,20,17.066667,0,17.066667,,,,2014-11-20 16:00,2014-11-23 16:00,,2014-09-27 16:00,2014-09-29 16:00,2014-09-27 16:00,2014-09-29 16:00,2014-09-27 16:00,2014-09-29 16:00,2014-11-20 16:00,2014-11-23 16:00,,PT_Normal,,,,,oIY2lOolTZWWE7rWMnXNpg,dosjCv3TtUuIFE1K6wDAjw,,,N,0,0,,,2014-02-17 15:27,2014-03-01 17:09,admin,admin,
279,127922,6764,35292,6640,0,N,N,N,CP_Drtn,TT_Task,DT_FixedDrtn,TK_NotStart,HHI.1728,Welding of Gusset Plates,,450,0,10,0,202.666668,202.666668,10,85.333333,0,85.333333,,,,2014-11-23 16:00,2014-11-24 16:00,,2014-09-29 16:00,2014-09-30 16:00,2014-09-29 16:00,2014-09-30 16:00,2014-09-29 16:00,2014-09-30 16:00,2014-11-23 16:00,2014-11-24 16:00,,PT_Normal,,,,,H00mmtxnRO++/4SuCESndQ,J9bw8rj8EEy+ooPlfnXrOg,,,N,0,0,,,2014-02-17 15:27,2014-03-01 17:09,admin,admin,
280,127923,6764,35293,6640,0,N,N,N,CP_Drtn,TT_Task,DT_FixedDrtn,TK_NotStart,HHI.1730,"Erect,Laydown & install Girders to Columns (1 Layers ,5 Girders)",,450,0,20,0,341.333331,341.333331,20,17.066666,0,17.066666,,,,2014-11-20 16:00,2014-11-23 16:00,,2014-09-27 16:00,2014-09-29 16:00,2014-09-27 16:00,2014-09-29 16:00,2014-09-27 16:00,2014-09-29 16:00,2014-11-20 16:00,2014-11-23 16:00,,PT_Normal,,,,,MeYYmMEkTceHxxXICTZhhQ,QEdKlRxv0UCAc/83OF8IOA,,,N,0,0,,,2014-02-17 15:27,2014-03-01 17:09,admin,admin,
281,127924,6764,35294,6640,0,N,N,N,CP_Drtn,TT_Task,DT_FixedDrtn,TK_NotStart,HHI.1731,"Erect,Lay Down & Install the Rafters (75 Rafters)/ Install Internal Piping Brackets/Piping",,450,0,50,0,1343.999994,1343.999994,50,17.066666,0,17.066666,,,,2014-11-22 16:00,2014-11-27 16:00,,2014-09-28 16:00,2014-10-06 16:00,2014-09-28 16:00,2014-10-06 16:00,2014-09-28 16:00,2014-10-06 16:00,2014-11-22 16:00,2014-11-27 16:00,,PT_Normal,,,,,U9+Fxj9fRL+8+TRqthIaZA,wd4pbSlYa0WVP9A9MnGTnw,,,N,0,0,,,2014-02-17 15:27,2014-03-01 17:09,admin,admin,
282,127925,6764,35295,6640,0,N,N,N,CP_Drtn,TT_Task,DT_FixedDrtn,TK_NotStart,HHI.1732,Prepare/Lay Down Roof Plates (27 Plates),,450,0,20,0,864.000004,864.000004,20,17.066667,0,17.066667,,,,2014-11-25 16:00,2014-11-27 16:00,,2014-10-01 16:00,2014-10-06 16:00,2014-10-01 16:00,2014-10-06 16:00,2014-10-01 16:00,2014-10-06 16:00,2014-11-25 16:00,2014-11-27 16:00,,PT_Normal,,,,,my55abryR9SwFOEziq1puw,WEAVgSmcPU+UDoTiD64E6g,,,N,0,0,,,2014-02-17 15:27,2014-03-01 17:09,admin,admin,
283,127926,6764,35295,6640,0,N,N,N,CP_Drtn,TT_Task,DT_FixedDrtn,TK_NotStart,HHI.1733,Tacking of Roof Plates,,450,0,20,0,968,968,20,0,0,0,,,,2014-11-25 16:00,2014-11-27 16:00,,2014-10-01 16:00,2014-10-06 16:00,2014-10-01 16:00,2014-10-06 16:00,2014-10-01 16:00,2014-10-06 16:00,2014-11-25 16:00,2014-11-27 16:00,,PT_Normal,,,,,FLi3yaLFR3SJhR0m/xs4BA,IeMu53kIWEadFj7/lLXSxg,,,N,0,0,,,2014-02-17 15:27,2014-03-01 17:09,admin,admin,
284,127927,6764,35295,6640,0,N,N,N,CP_Drtn,TT_Task,DT_FixedDrtn,TK_NotStart,HHI.1734,Welding of Roof Plates (Short Seams),,450,0,20,0,544,544,20,128,0,128,,,,2014-11-27 16:00,2014-11-30 16:00,,2014-10-06 16:00,2014-10-08 16:00,2014-10-06 16:00,2014-10-08 16:00,2014-10-06 16:00,2014-10-08 16:00,2014-11-27 16:00,2014-11-30 16:00,,PT_Normal,,,,,1rOWLalgRpqD3QVqAYcmZA,XyBEL/HnhkqwZToraJ6FOQ,,,N,0,0,,,2014-02-17 15:27,2014-03-01 17:09,admin,admin,
285,127928,6764,35295,6640,0,N,N,N,CP_Drtn,TT_Task,DT_FixedDrtn,TK_NotStart,HHI.1736,Welding of Roof Plates (Long Seams),,450,0,30,0,1728.000001,1728.000001,30,249.6,0,249.6,,,,2014-11-30 16:00,2014-12-03 16:00,,2014-10-08 16:00,2014-10-12 16:00,2014-10-08 16:00,2014-10-12 16:00,2014-10-08 16:00,2014-10-12 16:00,2014-11-30 16:00,2014-12-03 16:00,,PT_Normal,,,,,rnf/LH84Rx6+A9XgG+PrQw,LrpNGWkhZEuHha+lukeIJw,,,N,0,0,,,2014-02-17 15:27,2014-03-01 17:09,admin,admin,
286,127929,6764,35295,6640,0,N,N,N,CP_Drtn,TT_Task,DT_FixedDrtn,TK_NotStart,HHI.1735,Tack of Roof Plates to Curb Angle,,490,40,10,0,416,416,10,0,0,0,,,,2014-12-02 16:00,2014-12-03 16:00,,2014-10-06 16:00,2014-10-07 16:00,2014-10-06 16:00,2014-10-07 16:00,2014-10-06 16:00,2014-10-07 16:00,2014-12-02 16:00,2014-12-03 16:00,,PT_Normal,,,,,tEwXHM81QUGDsaBh8QiZXw,14+p0WL2sU2qBY4zZST8+Q,,,N,0,0,,,2014-02-17 15:27,2014-03-01 17:09,admin,admin,
287,127930,6764,35295,6640,0,N,N,N,CP_Drtn,TT_Task,DT_FixedDrtn,TK_NotStart,HHI.1737,Welding of Roof Plates to Compression Ring,,450,0,20,0,608.000003,608.000003,20,85.333333,0,85.333333,,,,2014-12-03 16:00,2014-12-06 16:00,,2014-10-12 16:00,2014-10-14 16:00,2014-10-12 16:00,2014-10-14 16:00,2014-10-12 16:00,2014-10-14 16:00,2014-12-03 16:00,2014-12-06 16:00,,PT_Normal,,,,,8Bp8XEuCRI+ymKXfg/2y0g,rIR+OMZt30yK7WDWr4d6jw,,,N,0,0,,,2014-02-17 15:27,2014-03-01 17:09,admin,admin,
288,127931,6764,35295,6640,0,N,N,N,CP_Drtn,TT_Task,DT_FixedDrtn,TK_NotStart,HHI.1740,"Quailty Check (Visual Inspection& Vaccum Box Test,PT,Air Leak Test for Roof Manholes& Nozzles))",,450,0,110,0,27.111111,27.111111,110,33.066667,0,33.066667,,,,2014-11-25 16:00,2014-12-08 16:00,,2014-10-01 16:00,2014-10-16 16:00,2014-10-01 16:00,2014-10-16 16:00,2014-10-01 16:00,2014-10-16 16:00,2014-11-25 16:00,2014-12-08 16:00,,PT_Normal,,,,,OjIhBE4YR3mQiNca9Bz0Aw,a81iPMKvKkmH4FLvsESdJw,,,N,0,0,,,2014-02-17 15:27,2014-03-01 17:09,admin,admin,
289,127932,6764,35295,6640,0,N,N,N,CP_Drtn,TT_Task,DT_FixedDrtn,TK_NotStart,HHI.1738,"Fit,Weld Manholes ,Nozzles & install Top Platform Supports on Roof",,450,0,20,0,0,0,20,0,0,0,,,,2014-12-06 16:00,2014-12-08 16:00,,2014-10-14 16:00,2014-10-16 16:00,2014-10-14 16:00,2014-10-16 16:00,2014-10-14 16:00,2014-10-16 16:00,2014-12-06 16:00,2014-12-08 16:00,,PT_Normal,,,,,LmfPfrDsR3ybSv/z1wH/ww,eb0/4UO4X0OE/OedJtmMfg,,,N,0,0,,,2014-02-17 15:27,2014-03-01 17:09,admin,admin,
290,127933,6764,35295,6640,0,N,N,N,CP_Drtn,TT_Task,DT_FixedDrtn,TK_NotStart,HHI.1739,Weld Internal Piping to Nozzle N1,,450,0,10,0,0,0,10,0,0,0,,,,2014-12-07 16:00,2014-12-08 16:00,,2014-10-15 16:00,2014-10-16 16:00,2014-10-15 16:00,2014-10-16 16:00,2014-10-15 16:00,2014-10-16 16:00,2014-12-07 16:00,2014-12-08 16:00,,PT_Normal,,,,,OwDD7yN1QzaRRv2KKPH2Zg,Dg6RN2dO10WebbSD/Xp5Dw,,,N,0,0,,,2014-02-17 15:27,2014-03-01 17:09,admin,admin,
291,127934,6764,35296,6640,0,N,N,N,CP_Drtn,TT_Task,DT_FixedDrtn,TK_NotStart,HHI.1741,Erect & Install Stairways & Platforms for Shell,,450,0,20,0,341.333337,341.333337,20,17.066667,0,17.066667,,,,2014-12-08 16:00,2014-12-10 16:00,,2014-10-16 16:00,2014-10-19 16:00,2014-10-16 16:00,2014-10-19 16:00,2014-10-16 16:00,2014-10-19 16:00,2014-12-08 16:00,2014-12-10 16:00,,PT_Normal,,,,,UsV3V41iRmSYofLkb3FJ+A,iQlsdTrJGECFP59cM/M7rA,,,N,0,0,,,2014-02-17 15:27,2014-03-01 17:09,admin,admin,
292,127935,6764,35296,6640,0,N,N,N,CP_Drtn,TT_Task,DT_FixedDrtn,TK_NotStart,HHI.1742,Erect & Install Stairways & Platforms & Handrails for Roof,,450,0,20,0,341.333337,341.333337,20,17.066667,0,17.066667,,,,2014-12-10 16:00,2014-12-13 16:00,,2014-10-19 16:00,2014-10-21 16:00,2014-10-19 16:00,2014-10-21 16:00,2014-10-19 16:00,2014-10-21 16:00,2014-12-10 16:00,2014-12-13 16:00,,PT_Normal,,,,,SBaAsFVGS4Gy4euhqGg02A,jhX3jTHTgkevosvPvXUAAg,,,N,0,0,,,2014-02-17 15:27,2014-03-01 17:09,admin,admin,
293,127936,6764,35296,6640,0,N,N,N,CP_Drtn,TT_Task,DT_FixedDrtn,TK_NotStart,HHI.1743,Quality Check,,450,0,10,0,0,0,10,0,0,0,,,,2014-12-13 16:00,2014-12-14 16:00,,2014-10-21 16:00,2014-10-22 16:00,2014-10-21 16:00,2014-10-22 16:00,2014-10-21 16:00,2014-10-22 16:00,2014-12-13 16:00,2014-12-14 16:00,,PT_Normal,,,,,Ics4CvhkQbeHvbFnEvQdzw,tvy5eYDdNkycBQYRrDH7nA,,,N,0,0,,,2014-02-17 15:27,2014-03-01 17:09,admin,admin,
294,127937,6764,35298,6640,0,N,N,N,CP_Drtn,TT_Task,DT_FixedDrtn,TK_NotStart,HHI.1642,Erect & Tack Wind Girder,,450,0,10,0,276.888892,276.888892,10,11.377778,0,11.377778,,,,2014-08-31 16:00,2014-09-01 16:00,,2014-06-29 13:00,2014-07-01 11:00,2014-06-29 13:00,2014-07-01 11:00,2014-06-29 13:00,2014-07-01 11:00,2014-08-31 16:00,2014-09-01 16:00,,PT_Normal,,,,,ZIxhib4+QICkgFMFH+bUCg,ppmolOMPJ0arFSWOErZ7ig,,,N,0,0,,,2014-02-17 15:27,2014-03-01 17:09,admin,admin,
295,127938,6764,35298,6640,0,N,N,N,CP_Drtn,TT_Task,DT_FixedDrtn,TK_NotStart,HHI.1643,Weld Wind Girder,,450,0,10,0,608.000004,608.000004,10,85.333333,0,85.333333,,,,2014-09-01 16:00,2014-09-02 16:00,,2014-07-01 11:00,2014-07-02 15:00,2014-07-01 11:00,2014-07-02 15:00,2014-07-01 11:00,2014-07-02 15:00,2014-09-01 16:00,2014-09-02 16:00,,PT_Normal,,,,,IDHfB/nlRpetCJN5wR8gsg,JhRzsSVYbk6W0fh18zQ57g,,,N,0,0,,,2014-02-17 15:27,2014-03-01 17:09,admin,admin,
296,127939,6764,35298,6640,0,N,N,N,CP_Drtn,TT_Task,DT_FixedDrtn,TK_NotStart,HHI.1644,Quailty Check(Visual Inspection & PT),,450,0,20,0,0,0,20,0,0,0,,,,2014-08-31 16:00,2014-09-02 16:00,,2014-06-29 13:00,2014-07-02 15:00,2014-06-29 13:00,2014-07-02 15:00,2014-06-29 13:00,2014-07-02 15:00,2014-08-31 16:00,2014-09-02 16:00,,PT_Normal,,,,,d7jD0EuxQ8y/Kuwq4Hw0SQ,uYD3Yxl8NkS94Na1Bgy3fA,,,N,0,0,,,2014-02-17 15:27,2014-03-01 17:09,admin,admin,
297,127940,6764,35299,6640,0,N,N,N,CP_Drtn,TT_Task,DT_FixedDrtn,TK_NotStart,HHI.1654,Erect & Tack Wind Girder,,450,0,10,0,276.888892,276.888892,10,11.377778,0,11.377778,,,,2014-09-10 11:00,2014-09-11 11:00,,2014-07-16 13:00,2014-07-19 11:00,2014-07-16 13:00,2014-07-19 11:00,2014-07-16 13:00,2014-07-19 11:00,2014-09-10 11:00,2014-09-11 11:00,,PT_Normal,,,,,RjicfSAMS2qRfwzEY8LYrA,z4VOO5JblE2DKRx7Y0A6wQ,,,N,0,0,,,2014-02-17 15:27,2014-03-01 17:09,admin,admin,
298,127941,6764,35299,6640,0,N,N,N,CP_Drtn,TT_Task,DT_FixedDrtn,TK_NotStart,HHI.1655,Weld Wind Girder,,450,0,10,0,608.000004,608.000004,10,85.333333,0,85.333333,,,,2014-09-11 11:00,2014-09-12 13:30,,2014-07-19 11:00,2014-07-20 15:00,2014-07-19 11:00,2014-07-20 15:00,2014-07-19 11:00,2014-07-20 15:00,2014-09-11 11:00,2014-09-12 13:30,,PT_Normal,,,,,dmfhNL6GTMygMnlYs3LygQ,j7sjrND8+kOLbNmf0mDA4Q,,,N,0,0,,,2014-02-17 15:27,2014-03-01 17:09,admin,admin,
299,127942,6764,35299,6640,0,N,N,N,CP_Drtn,TT_Task,DT_FixedDrtn,TK_NotStart,HHI.1656,Quailty Check(Visual Inspection & PT),,450,0,20,0,0,0,20,0,0,0,,,,2014-09-10 11:00,2014-09-12 13:30,,2014-07-16 13:00,2014-07-20 15:00,2014-07-16 13:00,2014-07-20 15:00,2014-07-16 13:00,2014-07-20 15:00,2014-09-10 11:00,2014-09-12 13:30,,PT_Normal,,,,,B6Aqn2rmQQyT2D/BIV/iWA,PhEmXEUenk2y8ZZBsDP16Q,,,N,0,0,,,2014-02-17 15:27,2014-03-01 17:09,admin,admin,
300,127943,6764,35300,6640,0,N,N,N,CP_Drtn,TT_Task,DT_FixedDrtn,TK_NotStart,HHI.1633,Erect & Tack Shell Course # 6 & Instal Stagging Brackets,,450,0,10,0,400,400,10,48,0,48,,,,2014-08-24 11:00,2014-08-25 11:00,,2014-06-21 07:00,2014-06-21 17:00,2014-06-21 07:00,2014-06-21 17:00,2014-06-21 07:00,2014-06-21 17:00,2014-08-24 11:00,2014-08-25 11:00,,PT_Normal,,,,,TJlmyW+5S0qWFJPc07nOrw,Jycex8EkpEa+2DFfqB9NHQ,,,N,0,0,,,2014-02-17 15:27,2014-03-01 17:09,admin,admin,
301,127944,6764,35300,6640,0,N,N,N,CP_Drtn,TT_Task,DT_FixedDrtn,TK_NotStart,HHI.1634,Weld Outer Vertical Seam/Install the Stairways support on Shell,,450,0,10,0,181.333332,181.333332,10,42.666666,0,42.666666,,,,2014-08-25 11:00,2014-08-26 11:00,,2014-06-22 07:00,2014-06-22 17:00,2014-06-22 07:00,2014-06-22 17:00,2014-06-22 07:00,2014-06-22 17:00,2014-08-25 11:00,2014-08-26 11:00,,PT_Normal,,,,,sErZKoo2SVeDMhcRv5hP/g,YAAoRPBWpUCZ6d4q0ftFlA,,,N,0,0,,,2014-02-17 15:27,2014-03-01 17:09,admin,admin,
302,127945,6764,35300,6640,0,N,N,N,CP_Drtn,TT_Task,DT_FixedDrtn,TK_NotStart,HHI.1635,Backgouge & NDT Inside Vertical Seam,,450,0,10,0,101.333332,101.333332,10,42.666666,0,42.666666,,,,2014-08-26 11:00,2014-08-27 11:00,,2014-06-23 07:00,2014-06-23 17:00,2014-06-23 07:00,2014-06-23 17:00,2014-06-23 07:00,2014-06-23 17:00,2014-08-26 11:00,2014-08-27 11:00,,PT_Normal,,,,,GqMa6E2JQ2GMY44t9QyIUA,E7QDphM6UkGAEz1uR1g4UA,,,N,0,0,,,2014-02-17 15:27,2014-03-01 17:09,admin,admin,
303,127946,6764,35300,6640,0,N,N,N,CP_Drtn,TT_Task,DT_FixedDrtn,TK_NotStart,HHI.1636,Weld Inside Vertical Seam,,450,0,10,0,191.999998,191.999998,10,42.666666,0,42.666666,,,,2014-08-27 11:00,2014-08-28 11:00,,2014-06-24 07:00,2014-06-24 17:00,2014-06-24 07:00,2014-06-24 17:00,2014-06-24 07:00,2014-06-24 17:00,2014-08-27 11:00,2014-08-28 11:00,,PT_Normal,,,,,w+1VtNfAQSm2kr7DY8hslA,DumbRP5mh0aaZMtWsA89kA,,,N,0,0,,,2014-02-17 15:27,2014-03-01 17:09,admin,admin,
304,127947,6764,35300,6640,0,N,N,N,CP_Drtn,TT_Task,DT_FixedDrtn,TK_NotStart,HHI.1637,"""""Weld Outer Horizontal Seam between Shell Course # 5 & 6""""",,450,0,10,0,405.333336,405.333336,10,85.333333,0,85.333333,,,,2014-08-28 11:00,2014-08-29 13:30,,2014-06-25 07:00,2014-06-25 17:00,2014-06-25 07:00,2014-06-25 17:00,2014-06-25 07:00,2014-06-25 17:00,2014-08-28 11:00,2014-08-29 13:30,,PT_Normal,,,,,1xAkGC0/RViwK5ELl3ElIw,dM7b5fkIfkGbv6zypDNCeg,,,N,0,0,,,2014-02-17 15:27,2014-03-01 17:09,admin,admin,
305,127948,6764,35300,6640,0,N,N,N,CP_Drtn,TT_Task,DT_FixedDrtn,TK_NotStart,HHI.1638,"""""Backgouge & NDT Inside Horizontal Seam between Shell Course# 5 & 6""""",,450,0,10,0,108.444444,108.444444,10,33.066667,0,33.066667,,,,2014-08-29 13:30,2014-08-30 16:00,,2014-06-26 07:00,2014-06-26 17:00,2014-06-26 07:00,2014-06-26 17:00,2014-06-26 07:00,2014-06-26 17:00,2014-08-29 13:30,2014-08-30 16:00,,PT_Normal,,,,,Td9xBOaUQ/2h5NMZw4p9rA,cKRrtDSwFE67RjGDgm7KPw,,,N,0,0,,,2014-02-17 15:27,2014-03-01 17:09,admin,admin,
306,127949,6764,35300,6640,0,N,N,N,CP_Drtn,TT_Task,DT_FixedDrtn,TK_NotStart,HHI.1639,"Weld Inner Horizontal Seam between Shell Course # 5 & 6""""",,450,0,10,0,202.666668,202.666668,10,85.333333,0,85.333333,,,,2014-08-30 16:00,2014-08-31 16:00,,2014-06-28 09:00,2014-06-29 13:00,2014-06-28 09:00,2014-06-29 13:00,2014-06-28 09:00,2014-06-29 13:00,2014-08-30 16:00,2014-08-31 16:00,,PT_Normal,,,,,Tqs+3sTgTwq3nfdwBWJXWw,MRz+cPrhdkGq+OmtcxAh+w,,,N,0,0,,,2014-02-17 15:27,2014-03-01 17:09,admin,admin,
307,127950,6764,35300,6640,0,N,N,N,CP_Drtn,TT_Task,DT_FixedDrtn,TK_NotStart,HHI.1641,"Quailty Check(Visual Inspection,PT,Air Leak Test for Shell Nozzle)",,450,0,60,0,34.222222,34.222222,60,33.066667,0,33.066667,,,,2014-08-25 11:00,2014-08-31 16:00,,2014-06-22 07:00,2014-06-29 13:00,2014-06-22 07:00,2014-06-29 13:00,2014-06-22 07:00,2014-06-29 13:00,2014-08-25 11:00,2014-08-31 16:00,,PT_Normal,,,,,8TwC5T4CT3uTY9nR9jLKVA,Sw9o81O+q0meLlDSPogAqA,,,N,0,0,,,2014-02-17 15:27,2014-03-01 17:09,admin,admin,
308,127951,6764,35300,6640,0,N,N,N,CP_Drtn,TT_Task,DT_FixedDrtn,TK_NotStart,HHI.1640,"Fit,Weld Nozzle on Shell",,450,0,10,0,0,0,10,0,0,0,,,,2014-08-30 16:00,2014-08-31 16:00,,2014-06-28 09:00,2014-06-29 13:00,2014-06-28 09:00,2014-06-29 13:00,2014-06-28 09:00,2014-06-29 13:00,2014-08-30 16:00,2014-08-31 16:00,,PT_Normal,,,,,q4dvY6hFTS+P2MwDYpZaQw,fbldQ+V3kkeOO57Zn+YcKg,,,N,0,0,,,2014-02-17 15:27,2014-03-01 17:09,admin,admin,
309,127952,6764,35301,6640,0,N,N,N,CP_Drtn,TT_Task,DT_FixedDrtn,TK_NotStart,HHI.1645,Erect & Tack Shell Course # 6 & Install Stagging Brackets,,450,0,10,0,380,380,10,48,0,48,,,,2014-09-02 16:00,2014-09-03 16:00,,2014-07-03 09:00,2014-07-05 13:00,2014-07-03 09:00,2014-07-05 13:00,2014-07-03 09:00,2014-07-05 13:00,2014-09-02 16:00,2014-09-03 16:00,,PT_Normal,,,,,Y5aP8DZ1Tt+VklFo/N6eIw,doUl0GNQbkubHm8J3bcBnw,,,N,0,0,,,2014-02-17 15:27,2014-03-01 17:09,admin,admin,
310,127953,6764,35301,6640,0,N,N,N,CP_Drtn,TT_Task,DT_FixedDrtn,TK_NotStart,HHI.1646,Weld Outer Vertical Seam/Install the Stairways support on Shell,,450,0,10,0,160,160,10,42.666666,0,42.666666,,,,2014-09-03 16:00,2014-09-04 16:00,,2014-07-05 13:00,2014-07-07 11:00,2014-07-05 13:00,2014-07-07 11:00,2014-07-05 13:00,2014-07-07 11:00,2014-09-03 16:00,2014-09-04 16:00,,PT_Normal,,,,,dPNLUNkVTHWSLFchn4/QMw,ssDxIBpK80CbnbeP7P0wfg,,,N,0,0,,,2014-02-17 15:27,2014-03-01 17:09,admin,admin,
311,127954,6764,35301,6640,0,N,N,N,CP_Drtn,TT_Task,DT_FixedDrtn,TK_NotStart,HHI.1647,Backgouge & NDT Inside Vertical Seam,,450,0,10,0,101.333332,101.333332,10,42.666666,0,42.666666,,,,2014-09-04 16:00,2014-09-06 11:00,,2014-07-07 11:00,2014-07-08 15:00,2014-07-07 11:00,2014-07-08 15:00,2014-07-07 11:00,2014-07-08 15:00,2014-09-04 16:00,2014-09-06 11:00,,PT_Normal,,,,,e2l3JPysS9+1Y89yNo41gw,ErQvIHuYwUySJTKD4cWcug,,,N,0,0,,,2014-02-17 15:27,2014-03-01 17:09,admin,admin,
312,127955,6764,35301,6640,0,N,N,N,CP_Drtn,TT_Task,DT_FixedDrtn,TK_NotStart,HHI.1648,Weld Inside Vertical Seam,,450,0,10,0,160,160,10,42.666666,0,42.666666,,,,2014-09-06 11:00,2014-09-07 11:00,,2014-07-09 09:00,2014-07-10 13:00,2014-07-09 09:00,2014-07-10 13:00,2014-07-09 09:00,2014-07-10 13:00,2014-09-06 11:00,2014-09-07 11:00,,PT_Normal,,,,,NA6/q0g+TmaQnbCGB+Jrog,ZL731rNOVkKdFO21k8xHBw,,,N,0,0,,,2014-02-17 15:27,2014-03-01 17:09,admin,admin,
313,127956,6764,35301,6640,0,N,N,N,CP_Drtn,TT_Task,DT_FixedDrtn,TK_NotStart,HHI.1649,"""""Weld Outer Horizontal Seam between Shell Course # 5 & 6""""",,450,0,10,0,405.333336,405.333336,10,85.333333,0,85.333333,,,,2014-09-07 11:00,2014-09-08 11:00,,2014-07-10 13:00,2014-07-13 11:00,2014-07-10 13:00,2014-07-13 11:00,2014-07-10 13:00,2014-07-13 11:00,2014-09-07 11:00,2014-09-08 11:00,,PT_Normal,,,,,9/PH3QXJQdWm0Ro6uWvH7Q,T9n5Mwd11U2npvHurBZbSg,,,N,0,0,,,2014-02-17 15:27,2014-03-01 17:09,admin,admin,
314,127957,6764,35301,6640,0,N,N,N,CP_Drtn,TT_Task,DT_FixedDrtn,TK_NotStart,HHI.1650,"""""Backgouge & NDT Inside Horizontal Seam between Shell Course# 5 & 6""""",,450,0,10,0,108.444444,108.444444,10,33.066667,0,33.066667,,,,2014-09-08 11:00,2014-09-09 11:00,,2014-07-13 11:00,2014-07-14 15:00,2014-07-13 11:00,2014-07-14 15:00,2014-07-13 11:00,2014-07-14 15:00,2014-09-08 11:00,2014-09-09 11:00,,PT_Normal,,,,,qiXsJLUPSDy7C3qu+xURgA,AtUcbUyXrkSvatzsyAyD1A,,,N,0,0,,,2014-02-17 15:27,2014-03-01 17:09,admin,admin,
315,127958,6764,35301,6640,0,N,N,N,CP_Drtn,TT_Task,DT_FixedDrtn,TK_NotStart,HHI.1651,"Weld Inner Horizontal Seam between Shell Course # 5 & 6""""",,450,0,10,0,202.666668,202.666668,10,85.333333,0,85.333333,,,,2014-09-09 11:00,2014-09-10 11:00,,2014-07-15 09:00,2014-07-16 13:00,2014-07-15 09:00,2014-07-16 13:00,2014-07-15 09:00,2014-07-16 13:00,2014-09-09 11:00,2014-09-10 11:00,,PT_Normal,,,,,/ldWp5XITLK530s92g9DdQ,JqmRcxdYXESRrN9YPKXLQg,,,N,0,0,,,2014-02-17 15:27,2014-03-01 17:09,admin,admin,
316,127959,6764,35301,6640,0,N,N,N,CP_Drtn,TT_Task,DT_FixedDrtn,TK_NotStart,HHI.1653,"Quailty Check(Visual Inspection,PT,Air Leak Test for Shell Nozzle)",,450,0,60,0,27.111111,27.111111,60,33.066667,0,33.066667,,,,2014-09-03 16:00,2014-09-10 11:00,,2014-07-05 13:00,2014-07-16 13:00,2014-07-05 13:00,2014-07-16 13:00,2014-07-05 13:00,2014-07-16 13:00,2014-09-03 16:00,2014-09-10 11:00,,PT_Normal,,,,,Da4AqUQZQJORSEQ9S7h0ew,mxOUvJ8kNECcPMKH2oFd/A,,,N,0,0,,,2014-02-17 15:27,2014-03-01 17:09,admin,admin,
317,127960,6764,35301,6640,0,N,N,N,CP_Drtn,TT_Task,DT_FixedDrtn,TK_NotStart,HHI.1652,"Fit,Weld Nozzle on Shell",,450,0,10,0,0,0,10,0,0,0,,,,2014-09-09 11:00,2014-09-10 11:00,,2014-07-15 09:00,2014-07-16 13:00,2014-07-15 09:00,2014-07-16 13:00,2014-07-15 09:00,2014-07-16 13:00,2014-09-09 11:00,2014-09-10 11:00,,PT_Normal,,,,,SNPyiWo5T2KpDemy246dwg,fbldQ+V3kkeOO57Zn+YcKg,,,N,0,0,,,2014-02-17 15:27,2014-03-01 17:09,admin,admin,
318,127961,6764,35302,6640,0,N,N,N,CP_Drtn,TT_Task,DT_FixedDrtn,TK_NotStart,HHI.1657,Perform RT for Tank#1 & #2,,450,0,10,0,0,0,10,0,0,0,,,,2014-09-12 13:30,2014-09-13 16:00,,2014-07-21 09:00,2014-07-22 13:00,2014-07-21 09:00,2014-07-22 13:00,2014-07-21 09:00,2014-07-22 13:00,2014-09-12 13:30,2014-09-13 16:00,,PT_Normal,,,,,7JMvObG2QdGTBJy1GByVUA,lIoEQjjNck+yoYvMymY4NQ,,,N,0,0,,,2014-02-17 15:27,2014-03-01 17:09,admin,admin,
319,127962,6764,35304,6640,0,N,N,N,CP_Drtn,TT_Task,DT_FixedDrtn,TK_NotStart,HHI.1531,Erect & Tack Shell Course # 1 & Install Stagging Brackets,,450,0,20,0,420,420,20,48,0,48,,,,2014-05-19 07:00,2014-05-20 17:00,,2014-03-27 07:00,2014-03-29 17:00,2014-03-27 07:00,2014-03-29 17:00,2014-03-27 07:00,2014-03-29 17:00,2014-05-19 07:00,2014-05-20 17:00,,PT_Normal,,,,,sZ+WjywZTs2IooLb/m/KjA,0E/smloR6EyT2SOhcvF57Q,,,N,0,0,,,2014-02-17 15:27,2014-03-01 17:09,admin,admin,
320,127963,6764,35304,6640,0,N,N,N,CP_Drtn,TT_Task,DT_FixedDrtn,TK_NotStart,HHI.1532,Weld Outer Vertical Seam/Install the Stairways support on Shell,,460,0,10,0,400,400,10,80,0,80,,,,2014-05-21 07:00,2014-05-21 17:00,,2014-03-29 07:00,2014-03-29 17:00,2014-03-29 07:00,2014-03-29 17:00,2014-03-29 07:00,2014-03-29 17:00,2014-05-21 07:00,2014-05-21 17:00,,PT_Normal,,,,,BkZoPMoOTkq6oKXEoPPWNA,aJkb3RmAXEeXRyyqLYEdvA,,,N,0,0,,,2014-02-17 15:27,2014-03-01 17:09,admin,admin,
321,127964,6764,35304,6640,0,N,N,N,CP_Drtn,TT_Task,DT_FixedDrtn,TK_NotStart,HHI.1534,"Backgouge,Grinding & NDT Inside Vertical Seam",,460,0,10,0,90,90,10,33.066667,0,33.066667,,,,2014-05-22 07:00,2014-05-22 17:00,,2014-03-30 07:00,2014-03-30 17:00,2014-03-30 07:00,2014-03-30 17:00,2014-03-30 07:00,2014-03-30 17:00,2014-05-22 07:00,2014-05-22 17:00,,PT_Normal,,,,,qDQMh4nqRDq1PDQc/ZUCLQ,J4No13vZxk622wD3T0uT6Q,,,N,0,0,,,2014-02-17 15:27,2014-03-01 17:09,admin,admin,
322,127965,6764,35304,6640,0,N,N,N,CP_Drtn,TT_Task,DT_FixedDrtn,TK_NotStart,HHI.1535,Weld Inside Vertical Seam,,460,0,10,0,181.333334,181.333334,10,85.333334,0,85.333334,,,,2014-05-24 07:00,2014-05-24 17:00,,2014-03-31 07:00,2014-03-31 17:00,2014-03-31 07:00,2014-03-31 17:00,2014-03-31 07:00,2014-03-31 17:00,2014-05-24 07:00,2014-05-24 17:00,,PT_Normal,,,,,vfbCU4qqRfWwRYhvxcAEOA,wO0P1Hehdk20v/UpV9+TIg,,,N,0,0,,,2014-02-17 15:27,2014-03-01 17:09,admin,admin,
323,127966,6764,35304,6640,0,N,N,N,CP_Drtn,TT_Task,DT_FixedDrtn,TK_NotStart,HHI.1537,"Quailty Check(Visual Inspection & PT,Air Leak Test for Shell Manholes& Nozzles)",,450,0,60,0,27.111111,27.111111,60,33.066667,0,33.066667,,,,2014-05-19 07:00,2014-05-25 17:00,,2014-03-27 07:00,2014-04-02 17:00,2014-03-27 07:00,2014-04-02 17:00,2014-03-27 07:00,2014-04-02 17:00,2014-05-19 07:00,2014-05-25 17:00,,PT_Normal,,,,,FWX8A0YlS9u5nB9lUyV6gg,WJJ2iSFEsEuSUqXAtrlnIg,,,N,0,0,,,2014-02-17 15:27,2014-03-01 17:09,admin,admin,
324,127967,6764,35304,6640,0,N,N,N,CP_Drtn,TT_Task,DT_FixedDrtn,TK_NotStart,HHI.1533,Fit up/Tack Shell #1 to Annular Plate,,460,0,10,0,0,0,10,0,0,0,,,,2014-05-21 07:00,2014-05-21 17:00,,2014-03-29 07:00,2014-03-29 17:00,2014-03-29 07:00,2014-03-29 17:00,2014-03-29 07:00,2014-03-29 17:00,2014-05-21 07:00,2014-05-21 17:00,,PT_Normal,,,,,hmdLtMFQSlKTw/QJgcNpTg,y5yDdgPwd0GTX/d0FOnSTQ,,,N,0,0,,,2014-02-17 15:27,2014-03-01 17:09,admin,admin,
325,127968,6764,35304,6640,0,N,N,N,CP_Drtn,TT_Task,DT_FixedDrtn,TK_NotStart,HHI.1536,"Fit,Weld for Manhole ,Nozzles on Shell",,460,10,20,0,0,0,20,0,0,0,,,,2014-05-24 07:00,2014-05-25 17:00,,2014-03-31 07:00,2014-04-01 17:00,2014-03-31 07:00,2014-04-01 17:00,2014-03-31 07:00,2014-04-01 17:00,2014-05-24 07:00,2014-05-25 17:00,,PT_Normal,,,,,WIoK8Mr/Qc+rdtAbP6JmlA,x5bmk8X+HUOd5iaetJdSYA,,,N,0,0,,,2014-02-17 15:27,2014-03-01 17:09,admin,admin,
326,127969,6764,35305,6640,0,N,N,N,CP_Drtn,TT_Task,DT_FixedDrtn,TK_NotStart,HHI.1545,Perform RT for Tank#1 & #2,,450,0,10,0,0,0,10,0,0,0,,,,2014-06-02 07:00,2014-06-02 17:00,,2014-04-10 07:00,2014-04-10 17:00,2014-04-10 07:00,2014-04-10 17:00,2014-04-10 07:00,2014-04-10 17:00,2014-06-02 07:00,2014-06-02 17:00,,PT_Normal,,,,,gXkLV43kSYyP3u3JdlcjBg,eAYPJ8I1Z0yjWdacaGbeFQ,,,N,0,0,,,2014-02-17 15:27,2014-03-01 17:09,admin,admin,
327,127970,6764,35306,6640,0,N,N,N,CP_Drtn,TT_Task,DT_FixedDrtn,TK_NotStart,HHI.1538,Erect & Tack Shell Course # 1 &Install Stagging Brackets,,450,0,20,0,420,420,20,48,0,48,,,,2014-05-26 07:00,2014-05-27 17:00,,2014-04-03 07:00,2014-04-05 17:00,2014-04-03 07:00,2014-04-05 17:00,2014-04-03 07:00,2014-04-05 17:00,2014-05-26 07:00,2014-05-27 17:00,,PT_Normal,,,,,H5UOK3CgSAu2rfLIyiPz4A,QidDUs3blUyJ71Bxk49s+w,,,N,0,0,,,2014-02-17 15:27,2014-03-01 17:09,admin,admin,
328,127971,6764,35306,6640,0,N,N,N,CP_Drtn,TT_Task,DT_FixedDrtn,TK_NotStart,HHI.1539,Weld Outer Vertical Seam/Install the Stairways support on Shell,,460,0,10,0,290.133334,290.133334,10,85.333334,0,85.333334,,,,2014-05-28 07:00,2014-05-28 17:00,,2014-04-05 07:00,2014-04-05 17:00,2014-04-05 07:00,2014-04-05 17:00,2014-04-05 07:00,2014-04-05 17:00,2014-05-28 07:00,2014-05-28 17:00,,PT_Normal,,,,,A2Paqt84QniOrbqiuD8KRA,o564OsHIX0+AMVbdjmMKgQ,,,N,0,0,,,2014-02-17 15:27,2014-03-01 17:09,admin,admin,
329,127972,6764,35306,6640,0,N,N,N,CP_Drtn,TT_Task,DT_FixedDrtn,TK_NotStart,HHI.1541,"Backgouge,Grinding & NDT Inside Vertical Seam",,460,0,10,0,87.111111,87.111111,10,33.066667,0,33.066667,,,,2014-05-29 07:00,2014-05-29 17:00,,2014-04-06 07:00,2014-04-06 17:00,2014-04-06 07:00,2014-04-06 17:00,2014-04-06 07:00,2014-04-06 17:00,2014-05-29 07:00,2014-05-29 17:00,,PT_Normal,,,,,CI4q7IRURHCVzuJeLk63Yw,cWq9fSBI8kaBswm1houFMw,,,N,0,0,,,2014-02-17 15:27,2014-03-01 17:09,admin,admin,
330,127973,6764,35306,6640,0,N,N,N,CP_Drtn,TT_Task,DT_FixedDrtn,TK_NotStart,HHI.1542,Weld Inside Vertical Seam,,460,0,10,0,192.000001,192.000001,10,85.333334,0,85.333334,,,,2014-05-31 07:00,2014-05-31 17:00,,2014-04-07 07:00,2014-04-07 17:00,2014-04-07 07:00,2014-04-07 17:00,2014-04-07 07:00,2014-04-07 17:00,2014-05-31 07:00,2014-05-31 17:00,,PT_Normal,,,,,0H7hCTUET16Hgjehn8aVsg,bW4nEjpq0E6hc+r9VeQzBg,,,N,0,0,,,2014-02-17 15:27,2014-03-01 17:09,admin,admin,
331,127974,6764,35306,6640,0,N,N,N,CP_Drtn,TT_Task,DT_FixedDrtn,TK_NotStart,HHI.1544,"Quailty Check(Visual Inspection  PT,Air Leak Test for Shell Manholes& Nozzles)",,450,0,60,0,21.333333,21.333333,60,33.066667,0,33.066667,,,,2014-05-26 07:00,2014-06-01 17:00,,2014-04-03 07:00,2014-04-09 17:00,2014-04-03 07:00,2014-04-09 17:00,2014-04-03 07:00,2014-04-09 17:00,2014-05-26 07:00,2014-06-01 17:00,,PT_Normal,,,,,wRJY1So1TdyJK55uQ854UQ,BOEBHfbPK0CpKS6kK89j4g,,,N,0,0,,,2014-02-17 15:27,2014-03-01 17:09,admin,admin,
332,127975,6764,35306,6640,0,N,N,N,CP_Drtn,TT_Task,DT_FixedDrtn,TK_NotStart,HHI.1540,Fit up/Tack Shell #1 to Annular Plate,,460,0,10,0,0,0,10,0,0,0,,,,2014-05-28 07:00,2014-05-28 17:00,,2014-04-05 07:00,2014-04-05 17:00,2014-04-05 07:00,2014-04-05 17:00,2014-04-05 07:00,2014-04-05 17:00,2014-05-28 07:00,2014-05-28 17:00,,PT_Normal,,,,,R4zT7d87T9KJrUwkt90eTA,ituuTPTo8UG3xMi+y4BowQ,,,N,0,0,,,2014-02-17 15:27,2014-03-01 17:09,admin,admin,
333,127976,6764,35306,6640,0,N,N,N,CP_Drtn,TT_Task,DT_FixedDrtn,TK_NotStart,HHI.1543,"Fit,Weld for Manhole ,Nozzles on Shell",,460,10,20,0,0,0,20,0,0,0,,,,2014-05-31 07:00,2014-06-01 17:00,,2014-04-07 07:00,2014-04-08 17:00,2014-04-07 07:00,2014-04-08 17:00,2014-04-07 07:00,2014-04-08 17:00,2014-05-31 07:00,2014-06-01 17:00,,PT_Normal,,,,,AII8uWuEQoGv0huJm/kZ9g,AoB1e4W8J0qUx+7h4mImOA,,,N,0,0,,,2014-02-17 15:27,2014-03-01 17:09,admin,admin,
334,127977,6764,35308,6640,0,N,N,N,CP_Drtn,TT_Task,DT_FixedDrtn,TK_NotStart,HHI.1519,"Install Sealent,Erect & Tack of Annular Plates",,450,0,10,0,80,80,10,8,0,8,,,,2014-05-04 07:00,2014-05-04 17:00,,2014-03-12 07:00,2014-03-12 17:00,2014-03-12 07:00,2014-03-12 17:00,2014-03-12 07:00,2014-03-12 17:00,2014-05-04 07:00,2014-05-04 17:00,,PT_Normal,,,,,YD+iyZeqSai44kUl3efZtA,d8Ea8JJjqkmhO1tziFG7Vw,,,N,0,0,,,2014-02-17 15:27,2014-03-01 17:09,admin,admin,
335,127978,6764,35308,6640,0,N,N,N,CP_Drtn,TT_Task,DT_FixedDrtn,TK_NotStart,HHI.1520,Welding of Annular Plates,,450,0,10,0,180,180,10,40,0,40,,,,2014-05-05 07:00,2014-05-05 17:00,,2014-03-13 07:00,2014-03-13 17:00,2014-03-13 07:00,2014-03-13 17:00,2014-03-13 07:00,2014-03-13 17:00,2014-05-05 07:00,2014-05-05 17:00,,PT_Normal,,,,,2ROI1BvZRu+X9BBT6dwqQg,+AHxq0mrmkqRPcBaIbFqKA,,,N,0,0,,,2014-02-17 15:27,2014-03-01 17:09,admin,admin,
336,127979,6764,35308,6640,0,N,N,N,CP_Drtn,TT_Task,DT_FixedDrtn,TK_NotStart,HHI.1521,"Quailty Check (Visual Inspection,PT & Vaccum Box Test)",,450,0,20,0,40,40,20,40,0,40,,,,2014-05-04 07:00,2014-05-05 17:00,,2014-03-12 07:00,2014-03-13 17:00,2014-03-12 07:00,2014-03-13 17:00,2014-03-12 07:00,2014-03-13 17:00,2014-05-04 07:00,2014-05-05 17:00,,PT_Normal,,,,,6pbTzjGNTEWkDpB/ArVvnw,crJRE4KFRkiNwceNzlp8gw,,,N,0,0,,,2014-02-17 15:27,2014-03-01 17:09,admin,admin,
337,127980,6764,35309,6640,0,N,N,N,CP_Drtn,TT_Task,DT_FixedDrtn,TK_NotStart,HHI.1522,Perform RT for Tank#1 & #2,,450,0,10,0,0,0,10,0,0,0,,,,2014-05-06 07:00,2014-05-06 17:00,,2014-03-15 07:00,2014-03-15 17:00,2014-03-15 07:00,2014-03-15 17:00,2014-03-15 07:00,2014-03-15 17:00,2014-05-06 07:00,2014-05-06 17:00,,PT_Normal,,,,,MZuQHUmWQkSSOjjSZ0FBiQ,+KHZuapPOkmQ3dJiYxmsmg,,,N,0,0,,,2014-02-17 15:27,2014-03-01 17:09,admin,admin,
338,127981,6764,35310,6640,0,N,N,N,CP_Drtn,TT_Task,DT_FixedDrtn,TK_NotStart,HHI.1523,Prepare & Lay Down Bottom Plates,,450,0,20,0,347.999998,347.999998,20,25.6,0,25.6,,,,2014-05-06 07:00,2014-05-07 17:00,,2014-03-15 07:00,2014-03-16 17:00,2014-03-15 07:00,2014-03-16 17:00,2014-03-15 07:00,2014-03-16 17:00,2014-05-06 07:00,2014-05-07 17:00,,PT_Normal,,,,,2C3NIriVRBqN/uoLnjdWtA,/JTGLzO4ck6pIN2LnRJjdw,,,N,0,0,,,2014-02-17 15:27,2014-03-01 17:09,admin,admin,
339,127982,6764,35310,6640,0,N,N,N,CP_Drtn,TT_Task,DT_FixedDrtn,TK_NotStart,HHI.1530,Quailty Check (Visual Inspection& Vaccum Box Test),,450,0,110,0,21.333334,21.333334,110,42.666666,0,42.666666,,,,2014-05-06 07:00,2014-05-18 17:00,,2014-03-15 07:00,2014-03-26 17:00,2014-03-15 07:00,2014-03-26 17:00,2014-03-15 07:00,2014-03-26 17:00,2014-05-06 07:00,2014-05-18 17:00,,PT_Normal,,,,,yCG/Lpo4TC27ONUuuOg/Rw,tf6VrJu9oUWRAwE+Q5i7Kg,,,N,0,0,,,2014-02-17 15:27,2014-03-01 17:09,admin,admin,
340,127983,6764,35310,6640,0,N,N,N,CP_Drtn,TT_Task,DT_FixedDrtn,TK_NotStart,HHI.1527,"Erect,Fitup of Sump",,470,20,10,0,51.999998,51.999998,10,42.666666,0,42.666666,,,,2014-05-17 07:00,2014-05-17 17:00,,2014-03-23 07:00,2014-03-23 17:00,2014-03-23 07:00,2014-03-23 17:00,2014-03-23 07:00,2014-03-23 17:00,2014-05-17 07:00,2014-05-17 17:00,,PT_Normal,,,,,2TdFQjt/S4WC3PPKkwhlKg,3sWa48Pmz0Gc4mL+5+Kkrw,,,N,0,0,,,2014-02-17 15:27,2014-03-01 17:09,admin,admin,
341,127984,6764,35310,6640,0,N,N,N,CP_Drtn,TT_Task,DT_FixedDrtn,TK_NotStart,HHI.1529,Weld Sump,,450,0,10,0,17.066666,17.066666,10,42.666666,0,42.666666,,,,2014-05-18 07:00,2014-05-18 17:00,,2014-03-26 07:00,2014-03-26 17:00,2014-03-26 07:00,2014-03-26 17:00,2014-03-26 07:00,2014-03-26 17:00,2014-05-18 07:00,2014-05-18 17:00,,PT_Normal,,,,,CGjRazhSTCu+VeM85TVtGg,abKS8dJLVUKkmDMw9MUliw,,,N,0,0,,,2014-02-17 15:27,2014-03-01 17:09,admin,admin,
342,127985,6764,35310,6640,0,N,N,N,CP_Drtn,TT_Task,DT_FixedDrtn,TK_NotStart,HHI.1524,Fit/Tack Bottom Plates-Short Seams,,450,0,20,0,0,0,20,0,0,0,,,,2014-05-10 07:00,2014-05-11 17:00,,2014-03-18 07:00,2014-03-19 17:00,2014-03-18 07:00,2014-03-19 17:00,2014-03-18 07:00,2014-03-19 17:00,2014-05-10 07:00,2014-05-11 17:00,,PT_Normal,,,,,eeaDWIgqRqqkZnexQeiWZg,amVirfkPC0urE2cTRnjCtQ,,,N,0,0,,,2014-02-17 15:27,2014-03-01 17:09,admin,admin,
343,127986,6764,35310,6640,0,N,N,N,CP_Drtn,TT_Task,DT_FixedDrtn,TK_NotStart,HHI.1525,Weld Short Seams,,450,0,20,0,0,0,20,0,0,0,,,,2014-05-11 07:00,2014-05-12 17:00,,2014-03-19 07:00,2014-03-20 17:00,2014-03-19 07:00,2014-03-20 17:00,2014-03-19 07:00,2014-03-20 17:00,2014-05-11 07:00,2014-05-12 17:00,,PT_Normal,,,,,LmJDGx56S1WwaPTnOwEDPQ,BQJajxvdrkKJcLz3l2Kt1A,,,N,0,0,,,2014-02-17 15:27,2014-03-01 17:09,admin,admin,
344,127987,6764,35310,6640,0,N,N,N,CP_Drtn,TT_Task,DT_FixedDrtn,TK_NotStart,HHI.1526,Fit/Tack Bottom Plates-Long Seams,,450,0,20,0,0,0,20,0,0,0,,,,2014-05-13 07:00,2014-05-14 17:00,,2014-03-22 07:00,2014-03-23 17:00,2014-03-22 07:00,2014-03-23 17:00,2014-03-22 07:00,2014-03-23 17:00,2014-05-13 07:00,2014-05-14 17:00,,PT_Normal,,,,,vZKtDA5FQhapDbBU/utRnA,A2a0Y44V4kupnfuY7qyaIg,,,N,0,0,,,2014-02-17 15:27,2014-03-01 17:09,admin,admin,
345,127988,6764,35310,6640,0,N,N,N,CP_Drtn,TT_Task,DT_FixedDrtn,TK_NotStart,HHI.1528,Weld Long Seams,,450,0,40,0,0,0,40,0,0,0,,,,2014-05-14 07:00,2014-05-18 17:00,,2014-03-23 07:00,2014-03-26 17:00,2014-03-23 07:00,2014-03-26 17:00,2014-03-23 07:00,2014-03-26 17:00,2014-05-14 07:00,2014-05-18 17:00,,PT_Normal,,,,,v6REkfFzRiqEZEJD5wH0oA,Qu4gYMyqGkO9b5iWJo4qKQ,,,N,0,0,,,2014-02-17 15:27,2014-03-01 17:09,admin,admin,
346,127989,6764,35312,6640,0,N,N,N,CP_Drtn,TT_Task,DT_FixedDrtn,TK_NotStart,HHI.1744,Mechanical Completion (MCC) & Final Isnpection Before Hydrotesting,,660,0,10,0,16,16,10,40,0,40,,,,2014-12-13 16:00,2014-12-14 16:00,,2014-09-24 16:00,2014-09-25 16:00,2014-09-24 16:00,2014-09-25 16:00,2014-09-24 16:00,2014-09-25 16:00,2014-12-13 16:00,2014-12-14 16:00,,PT_Normal,,,,,MX3R7JR2RWOeYIlvssi6FQ,scd4RxKlFEKirfC5/3F/SA,,,N,0,0,,,2014-02-17 15:27,2014-03-01 17:09,admin,admin,
347,127990,6764,35313,6640,0,N,N,N,CP_Drtn,TT_Task,DT_FixedDrtn,TK_NotStart,HHI.1745,Mechanical Completion (MCC) & Final Inspection Before Hydrotesting,,450,0,10,0,24,24,10,40,0,40,,,,2014-12-14 16:00,2014-12-15 16:00,,2014-10-22 16:00,2014-10-23 16:00,2014-10-22 16:00,2014-10-23 16:00,2014-10-22 16:00,2014-10-23 16:00,2014-12-14 16:00,2014-12-15 16:00,,PT_Normal,,,,,H+4GeCGeRZCyuI1Lv0ywFg,I/ZuckRQW0CnfKHiaMCH3g,,,N,0,0,,,2014-02-17 15:27,2014-03-01 17:09,admin,admin,
348,127991,6764,35315,6640,0,N,N,N,CP_Drtn,TT_Task,DT_FixedDrtn,TK_NotStart,HHI.1568,Perform RT for Tank#1 & #2,,450,0,10,0,0,0,10,0,0,0,,,,2014-07-01 11:00,2014-07-02 15:00,,2014-05-08 07:00,2014-05-08 17:00,2014-05-08 07:00,2014-05-08 17:00,2014-05-08 07:00,2014-05-08 17:00,2014-07-01 11:00,2014-07-02 15:00,,PT_Normal,,,,,ZInhjLStQte1lpSXBZezdg,Eh8Uq8uuyEm12NkhdNMgPg,,,N,0,0,,,2014-02-17 15:27,2014-03-01 17:09,admin,admin,
349,127992,6764,35316,6640,0,N,N,N,CP_Drtn,TT_Task,DT_FixedDrtn,TK_NotStart,HHI.1547,Weld Outer Vertical Seam/Install the Stairways support on Shell,,450,0,10,0,384.000002,384.000002,10,85.333333,0,85.333333,,,,2014-06-03 07:00,2014-06-03 17:00,,2014-04-12 07:00,2014-04-12 17:00,2014-04-12 07:00,2014-04-12 17:00,2014-04-12 07:00,2014-04-12 17:00,2014-06-03 07:00,2014-06-03 17:00,,PT_Normal,,,,,0FP/5YdsS/qPTgijynwAqg,8yQHhFwva0m6MP9xnczyzA,,,N,0,0,,,2014-02-17 15:27,2014-03-01 17:09,admin,admin,
350,127993,6764,35316,6640,0,N,N,N,CP_Drtn,TT_Task,DT_FixedDrtn,TK_NotStart,HHI.1548,"Backgouge,Grinding & NDT Inside Vertical Seam",,450,0,10,0,101.333333,101.333333,10,33.066667,0,33.066667,,,,2014-06-04 07:00,2014-06-04 17:00,,2014-04-13 07:00,2014-04-13 17:00,2014-04-13 07:00,2014-04-13 17:00,2014-04-13 07:00,2014-04-13 17:00,2014-06-04 07:00,2014-06-04 17:00,,PT_Normal,,,,,bmK0E8LzTC+6LMCCtDroyw,l1DHWi8Iv0y6PkG1epYfPw,,,N,0,0,,,2014-02-17 15:27,2014-03-01 17:09,admin,admin,
351,127994,6764,35316,6640,0,N,N,N,CP_Drtn,TT_Task,DT_FixedDrtn,TK_NotStart,HHI.1549,Weld Inside Vertical Seam,,450,0,10,0,202.666668,202.666668,10,85.333333,0,85.333333,,,,2014-06-05 07:00,2014-06-05 17:00,,2014-04-14 07:00,2014-04-14 17:00,2014-04-14 07:00,2014-04-14 17:00,2014-04-14 07:00,2014-04-14 17:00,2014-06-05 07:00,2014-06-05 17:00,,PT_Normal,,,,,caGb04z0SkWrrOb1E1pE3g,vABIbaNOV0C5hRtL4qqq8A,,,N,0,0,,,2014-02-17 15:27,2014-03-01 17:09,admin,admin,
352,127995,6764,35316,6640,0,N,N,N,CP_Drtn,TT_Task,DT_FixedDrtn,TK_NotStart,HHI.1550,"""""Weld Outer Horizontal Seam between Shell Course # 1 & 2""""",,450,0,20,0,608,608,20,166.4,0,166.4,,,,2014-06-07 07:00,2014-06-08 17:00,,2014-04-15 07:00,2014-04-16 17:00,2014-04-15 07:00,2014-04-16 17:00,2014-04-15 07:00,2014-04-16 17:00,2014-06-07 07:00,2014-06-08 17:00,,PT_Normal,,,,,ecDFCkwJSguue/IcmpyGoA,7Mts/JYoiUmUswrKrHYpdA,,,N,0,0,,,2014-02-17 15:27,2014-03-01 17:09,admin,admin,
353,127996,6764,35316,6640,0,N,N,N,CP_Drtn,TT_Task,DT_FixedDrtn,TK_NotStart,HHI.1551,"""""Backgouge & NDT Inside Horizontal Seam between Shell Course# 1 & 2""""",,450,0,10,0,122.666668,122.666668,10,85.333333,0,85.333333,,,,2014-06-09 07:00,2014-06-09 17:00,,2014-04-17 07:00,2014-04-17 17:00,2014-04-17 07:00,2014-04-17 17:00,2014-04-17 07:00,2014-04-17 17:00,2014-06-09 07:00,2014-06-09 17:00,,PT_Normal,,,,,b/qiLt1QSP+9LDGAamDodQ,i9bEs6zNzkiBADApyugL8g,,,N,0,0,,,2014-02-17 15:27,2014-03-01 17:09,admin,admin,
354,127997,6764,35316,6640,0,N,N,N,CP_Drtn,TT_Task,DT_FixedDrtn,TK_NotStart,HHI.1552,"Weld Inner Horizontal Seam between Shell Course # 1 & 2""""",,450,0,20,0,608,608,20,166.4,0,166.4,,,,2014-06-10 07:00,2014-06-11 17:00,,2014-04-19 07:00,2014-04-20 17:00,2014-04-19 07:00,2014-04-20 17:00,2014-04-19 07:00,2014-04-20 17:00,2014-06-10 07:00,2014-06-11 17:00,,PT_Normal,,,,,xzlS2apcRQG4+cX8y9pdPw,xDE9VjpM40aaZPKdTd9kjg,,,N,0,0,,,2014-02-17 15:27,2014-03-01 17:09,admin,admin,
355,127998,6764,35316,6640,0,N,N,N,CP_Drtn,TT_Task,DT_FixedDrtn,TK_NotStart,HHI.1553,Weld Shell Course# 1 to Annular Plate (from inside),,450,0,10,0,405.333336,405.333336,10,85.333333,0,85.333333,,,,2014-06-12 07:00,2014-06-12 17:00,,2014-04-21 07:00,2014-04-21 17:00,2014-04-21 07:00,2014-04-21 17:00,2014-04-21 07:00,2014-04-21 17:00,2014-06-12 07:00,2014-06-12 17:00,,PT_Normal,,,,,7VufGu80SGmazgwJNN4exQ,ihOkRI1jUEiA7vZnMwViOw,,,N,0,0,,,2014-02-17 15:27,2014-03-01 17:09,admin,admin,
356,127999,6764,35316,6640,0,N,N,N,CP_Drtn,TT_Task,DT_FixedDrtn,TK_NotStart,HHI.1554,"Perform PT from inside,Complete the welding from outside & Perform Vaccum Box Testing",,450,0,10,0,426.666665,426.666665,10,128,0,128,,,,2014-06-14 07:00,2014-06-14 17:00,,2014-04-22 07:00,2014-04-22 17:00,2014-04-22 07:00,2014-04-22 17:00,2014-04-22 07:00,2014-04-22 17:00,2014-06-14 07:00,2014-06-14 17:00,,PT_Normal,,,,,qPr34qytQlOvGz2S91Givw,l+9gf1MSsUGHcbyVIQl0HA,,,N,0,0,,,2014-02-17 15:27,2014-03-01 17:09,admin,admin,
357,128000,6764,35316,6640,0,N,N,N,CP_Drtn,TT_Task,DT_FixedDrtn,TK_NotStart,HHI.1556,Quailty Check(Visual Inspection),,450,0,120,0,27.111111,27.111111,120,33.066667,0,33.066667,,,,2014-06-02 07:00,2014-06-15 17:00,,2014-04-10 07:00,2014-04-23 17:00,2014-04-10 07:00,2014-04-23 17:00,2014-04-10 07:00,2014-04-23 17:00,2014-06-02 07:00,2014-06-15 17:00,,PT_Normal,,,,,PxNf/MvRSQiY4t7yfrQg2A,2Z5Izau3TUWrEpCOebD1jQ,,,N,0,0,,,2014-02-17 15:27,2014-03-01 17:09,admin,admin,
358,128001,6764,35316,6640,0,N,N,N,CP_Drtn,TT_Task,DT_FixedDrtn,TK_NotStart,HHI.1546,Erect & Tack Shell Course # 2 & Install Stagging Brackets,,450,0,10,0,272,272,10,32,0,32,,,,2014-06-02 07:00,2014-06-02 17:00,,2014-04-10 07:00,2014-04-10 17:00,2014-04-10 07:00,2014-04-10 17:00,2014-04-10 07:00,2014-04-10 17:00,2014-06-02 07:00,2014-06-02 17:00,,PT_Normal,,,,,LOAwlcQgRoedV+5T3ilfMw,XmcoQy0jp0yL/lTEbqONGw,,,N,0,0,,,2014-02-17 15:27,2014-03-01 17:09,admin,admin,
359,128002,6764,35316,6640,0,N,N,N,CP_Drtn,TT_Task,DT_FixedDrtn,TK_NotStart,HHI.1555,Weld Bottom Sketch Plates to Annular Plate,,450,0,10,0,0,0,10,0,0,0,,,,2014-06-15 07:00,2014-06-15 17:00,,2014-04-23 07:00,2014-04-23 17:00,2014-04-23 07:00,2014-04-23 17:00,2014-04-23 07:00,2014-04-23 17:00,2014-06-15 07:00,2014-06-15 17:00,,PT_Normal,,,,,JGvn1PCcSSGy472jR0SwtA,/tfiv/Dzq0O4/BZlFL0wNw,,,N,0,0,,,2014-02-17 15:27,2014-03-01 17:09,admin,admin,
360,128003,6764,35317,6640,0,N,N,N,CP_Drtn,TT_Task,DT_FixedDrtn,TK_NotStart,HHI.1557,Erect & Tack Shell Course # 2& Install Stagging Brackets,,450,0,10,0,340,340,10,48,0,48,,,,2014-06-16 07:00,2014-06-16 17:00,,2014-04-24 07:00,2014-04-24 17:00,2014-04-24 07:00,2014-04-24 17:00,2014-04-24 07:00,2014-04-24 17:00,2014-06-16 07:00,2014-06-16 17:00,,PT_Normal,,,,,IRppe5InQCSUqPiB+ZC0Vg,N53S8e2I+ECU4Y+sS/yD8Q,,,N,0,0,,,2014-02-17 15:27,2014-03-01 17:09,admin,admin,
361,128004,6764,35317,6640,0,N,N,N,CP_Drtn,TT_Task,DT_FixedDrtn,TK_NotStart,HHI.1558,Weld Outer Vertical Seam/Install the Stairways support on Shell,,450,0,10,0,384.000002,384.000002,10,85.333333,0,85.333333,,,,2014-06-17 07:00,2014-06-17 17:00,,2014-04-26 07:00,2014-04-26 17:00,2014-04-26 07:00,2014-04-26 17:00,2014-04-26 07:00,2014-04-26 17:00,2014-06-17 07:00,2014-06-17 17:00,,PT_Normal,,,,,qWlM+fYSSO2k5KTzfS2qDA,x1GTGLla6UW2Re6uWTV0vw,,,N,0,0,,,2014-02-17 15:27,2014-03-01 17:09,admin,admin,
362,128005,6764,35317,6640,0,N,N,N,CP_Drtn,TT_Task,DT_FixedDrtn,TK_NotStart,HHI.1559,"Backgouge,Grinding & NDT Inside Vertical Seam",,450,0,10,0,97.111111,97.111111,10,33.066667,0,33.066667,,,,2014-06-18 07:00,2014-06-18 17:00,,2014-04-27 07:00,2014-04-27 17:00,2014-04-27 07:00,2014-04-27 17:00,2014-04-27 07:00,2014-04-27 17:00,2014-06-18 07:00,2014-06-18 17:00,,PT_Normal,,,,,gJU4s3CSQayuAxwqe0dDyg,Uiu9KKHm4EqIMRwxzQEJIw,,,N,0,0,,,2014-02-17 15:27,2014-03-01 17:09,admin,admin,
363,128006,6764,35317,6640,0,N,N,N,CP_Drtn,TT_Task,DT_FixedDrtn,TK_NotStart,HHI.1560,Weld Inside Vertical Seam,,450,0,10,0,202.666668,202.666668,10,85.333333,0,85.333333,,,,2014-06-19 07:00,2014-06-19 17:00,,2014-04-28 07:00,2014-04-28 17:00,2014-04-28 07:00,2014-04-28 17:00,2014-04-28 07:00,2014-04-28 17:00,2014-06-19 07:00,2014-06-19 17:00,,PT_Normal,,,,,ZSHYrI0QRrWgQ2DJUSOYmQ,Lv1TiOUfJUGhEehgzTGvCw,,,N,0,0,,,2014-02-17 15:27,2014-03-01 17:09,admin,admin,
364,128007,6764,35317,6640,0,N,N,N,CP_Drtn,TT_Task,DT_FixedDrtn,TK_NotStart,HHI.1561,"""""Weld Outer Horizontal Seam between Shell Course # 1 & 2""""",,450,0,20,0,608,608,20,166.4,0,166.4,,,,2014-06-21 07:00,2014-06-22 17:00,,2014-04-29 07:00,2014-04-30 17:00,2014-04-29 07:00,2014-04-30 17:00,2014-04-29 07:00,2014-04-30 17:00,2014-06-21 07:00,2014-06-22 17:00,,PT_Normal,,,,,E4EostHbSlSGs9Uw3GbOpQ,0IFb/ytcK02fl9nqltqp/A,,,N,0,0,,,2014-02-17 15:27,2014-03-01 17:09,admin,admin,
365,128008,6764,35317,6640,0,N,N,N,CP_Drtn,TT_Task,DT_FixedDrtn,TK_NotStart,HHI.1562,"""""Backgouge & NDT Inside Horizontal Seam between Shell Course# 1 & 2""""",,450,0,10,0,122.666668,122.666668,10,85.333333,0,85.333333,,,,2014-06-23 07:00,2014-06-23 17:00,,2014-05-01 07:00,2014-05-01 17:00,2014-05-01 07:00,2014-05-01 17:00,2014-05-01 07:00,2014-05-01 17:00,2014-06-23 07:00,2014-06-23 17:00,,PT_Normal,,,,,QacmnLYJRPmEum1jRJCkEA,lzWK0P01l0+c31KX1s+pYA,,,N,0,0,,,2014-02-17 15:27,2014-03-01 17:09,admin,admin,
366,128009,6764,35317,6640,0,N,N,N,CP_Drtn,TT_Task,DT_FixedDrtn,TK_NotStart,HHI.1563,"Weld Inner Horizontal Seam between Shell Course # 1 & 2""""",,450,0,20,0,608,608,20,166.4,0,166.4,,,,2014-06-24 07:00,2014-06-25 17:00,,2014-05-03 07:00,2014-05-04 17:00,2014-05-03 07:00,2014-05-04 17:00,2014-05-03 07:00,2014-05-04 17:00,2014-06-24 07:00,2014-06-25 17:00,,PT_Normal,,,,,nLelH+8aQm+yaXH2eatozQ,4+weyCe4LkeyWvLPNkAgmA,,,N,0,0,,,2014-02-17 15:27,2014-03-01 17:09,admin,admin,
367,128010,6764,35317,6640,0,N,N,N,CP_Drtn,TT_Task,DT_FixedDrtn,TK_NotStart,HHI.1564,Weld Shell Course# 1 to Annular Plate (from inside),,450,0,10,0,405.333336,405.333336,10,85.333333,0,85.333333,,,,2014-06-26 07:00,2014-06-26 17:00,,2014-05-05 07:00,2014-05-05 17:00,2014-05-05 07:00,2014-05-05 17:00,2014-05-05 07:00,2014-05-05 17:00,2014-06-26 07:00,2014-06-26 17:00,,PT_Normal,,,,,j1takzb2Q/m8Zq/eYfLe/g,3n/TNohGCEeIiNBZ/3nCVA,,,N,0,0,,,2014-02-17 15:27,2014-03-01 17:09,admin,admin,
368,128011,6764,35317,6640,0,N,N,N,CP_Drtn,TT_Task,DT_FixedDrtn,TK_NotStart,HHI.1565,"Perform PT from inside,Complete the welding from outside & Perform Vaccum Box Testing",,450,0,10,0,426.666665,426.666665,10,128,0,128,,,,2014-06-28 09:00,2014-06-29 13:00,,2014-05-06 07:00,2014-05-06 17:00,2014-05-06 07:00,2014-05-06 17:00,2014-05-06 07:00,2014-05-06 17:00,2014-06-28 09:00,2014-06-29 13:00,,PT_Normal,,,,,xL+wVOFaSxCBY/MHYmHMJA,UbAwdrzqvkO66Cq25P8F9A,,,N,0,0,,,2014-02-17 15:27,2014-03-01 17:09,admin,admin,
369,128012,6764,35317,6640,0,N,N,N,CP_Drtn,TT_Task,DT_FixedDrtn,TK_NotStart,HHI.1567,Quailty Check(Visual Inspection),,450,0,120,0,34.222222,34.222222,120,33.066667,0,33.066667,,,,2014-06-16 07:00,2014-07-01 11:00,,2014-04-24 07:00,2014-05-07 17:00,2014-04-24 07:00,2014-05-07 17:00,2014-04-24 07:00,2014-05-07 17:00,2014-06-16 07:00,2014-07-01 11:00,,PT_Normal,,,,,cU7HTZ4mTMy31t41ce6lpw,z942WApgs0eJfAMoFzYjTA,,,N,0,0,,,2014-02-17 15:27,2014-03-01 17:09,admin,admin,
370,128013,6764,35317,6640,0,N,N,N,CP_Drtn,TT_Task,DT_FixedDrtn,TK_NotStart,HHI.1566,Weld Bottom Sketch Plates to Annular Plate,,450,0,10,0,0,0,10,0,0,0,,,,2014-06-29 13:00,2014-07-01 11:00,,2014-05-07 07:00,2014-05-07 17:00,2014-05-07 07:00,2014-05-07 17:00,2014-05-07 07:00,2014-05-07 17:00,2014-06-29 13:00,2014-07-01 11:00,,PT_Normal,,,,,/LWlJyOZQcKwj63/3mRHhw,INSwGB9ry0+kObBQv//mPg,,,N,0,0,,,2014-02-17 15:27,2014-03-01 17:09,admin,admin,
371,128014,6764,35319,6640,0,N,N,N,CP_Drtn,TT_Task,DT_FixedDrtn,TK_NotStart,HHI.1508,"Install Sealent,Erect & Tack of Annular Plates",,490,0,10,0,80,80,10,8,0,8,,,,2014-04-27 07:00,2014-04-27 17:00,,2014-03-01 07:00,2014-03-01 17:00,2014-03-01 07:00,2014-03-01 17:00,2014-03-01 07:00,2014-03-01 17:00,2014-04-27 07:00,2014-04-27 17:00,,PT_Normal,,,,,xhCvB9h4SUKFFCiChxWkPw,y+shSUdS80KoqWNcfboEJg,,,N,0,0,,,2014-02-17 15:27,2014-03-01 17:09,admin,admin,
372,128015,6764,35319,6640,0,N,N,N,CP_Drtn,TT_Task,DT_FixedDrtn,TK_NotStart,HHI.1509,Welding of Annular Plates,,490,0,10,0,180,180,10,40,0,40,,,,2014-04-28 07:00,2014-04-28 17:00,,2014-03-02 07:00,2014-03-02 17:00,2014-03-02 07:00,2014-03-02 17:00,2014-03-02 07:00,2014-03-02 17:00,2014-04-28 07:00,2014-04-28 17:00,,PT_Normal,,,,,RNYzP/PSR1WIpWhouwWchQ,Pqk0GhP1vUKD1bpSyBQjSw,,,N,0,0,,,2014-02-17 15:27,2014-03-01 17:09,admin,admin,
373,128016,6764,35319,6640,0,N,N,N,CP_Drtn,TT_Task,DT_FixedDrtn,TK_NotStart,HHI.1510,"Quailty Check (Visual Inspection,PT & Vaccum Box Test)",,490,0,20,0,40,40,20,40,0,40,,,,2014-04-27 07:00,2014-04-28 17:00,,2014-03-01 07:00,2014-03-02 17:00,2014-03-01 07:00,2014-03-02 17:00,2014-03-01 07:00,2014-03-02 17:00,2014-04-27 07:00,2014-04-28 17:00,,PT_Normal,,,,,EHrv+iM9TqSSJ3853+73og,NuaL4jmMN0upmOgQiU9DTA,,,N,0,0,,,2014-02-17 15:27,2014-03-01 17:09,admin,admin,
374,128017,6764,35320,6640,0,N,N,N,CP_Drtn,TT_Task,DT_FixedDrtn,TK_NotStart,HHI.1512,"Erect,Fitup of Sump",,510,20,10,0,51.999998,51.999998,10,42.666666,0,42.666666,,,,2014-05-10 07:00,2014-05-10 17:00,,2014-03-11 07:00,2014-03-11 17:00,2014-03-11 07:00,2014-03-11 17:00,2014-03-11 07:00,2014-03-11 17:00,2014-05-10 07:00,2014-05-10 17:00,,PT_Normal,,,,,zPQf8JLKRyeQO8z6LH7mlw,7bvyWcoTK0yTldquwZrHVg,,,N,0,0,,,2014-02-17 15:27,2014-03-01 17:09,admin,admin,
375,128018,6764,35320,6640,0,N,N,N,CP_Drtn,TT_Task,DT_FixedDrtn,TK_NotStart,HHI.1513,Weld Sump,,490,0,10,0,17.066666,17.066666,10,42.666666,0,42.666666,,,,2014-05-11 07:00,2014-05-11 17:00,,2014-03-15 07:00,2014-03-15 17:00,2014-03-15 07:00,2014-03-15 17:00,2014-03-15 07:00,2014-03-15 17:00,2014-05-11 07:00,2014-05-11 17:00,,PT_Normal,,,,,+Q74DqsNQvm/sj2wTTpzGA,V+xyf037yUSG9FZ7Lfu5pA,,,N,0,0,,,2014-02-17 15:27,2014-03-01 17:09,admin,admin,
376,128019,6764,35320,6640,0,N,N,N,CP_Drtn,TT_Task,DT_FixedDrtn,TK_NotStart,HHI.1511,Prepare & Lay Down Bottom Plates,,490,0,20,0,347.999998,347.999998,20,25.6,0,25.6,,,,2014-04-29 07:00,2014-04-30 17:00,,2014-03-03 07:00,2014-03-04 17:00,2014-03-03 07:00,2014-03-04 17:00,2014-03-03 07:00,2014-03-04 17:00,2014-04-29 07:00,2014-04-30 17:00,,PT_Normal,,,,,qm2bMnULT5CIwECW2XBA2g,RFrBDNTLWkieicUS/x4jHA,,,N,0,0,,,2014-02-17 15:27,2014-03-01 17:09,admin,admin,
377,128020,6764,35320,6640,0,N,N,N,CP_Drtn,TT_Task,DT_FixedDrtn,TK_NotStart,HHI.1518,Quailty Check (Visual Inspection& Vaccum Box Test),,490,40,110,0,21.333334,21.333334,110,42.666666,0,42.666666,,,,2014-04-29 07:00,2014-05-11 17:00,,2014-03-03 07:00,2014-03-15 17:00,2014-03-03 07:00,2014-03-15 17:00,2014-03-03 07:00,2014-03-15 17:00,2014-04-29 07:00,2014-05-11 17:00,,PT_Normal,,,,,sJt5BLQKQtyWRwFiUaZiBA,6xYn/IR5DkC2gZTiV0dWvQ,,,N,0,0,,,2014-02-17 15:27,2014-03-01 17:09,admin,admin,
378,128021,6764,35320,6640,0,N,N,N,CP_Drtn,TT_Task,DT_FixedDrtn,TK_NotStart,HHI.1514,Fit/Tack Bottom Plates-Short Seams,,490,0,20,0,0,0,20,0,0,0,,,,2014-05-03 07:00,2014-05-04 17:00,,2014-03-06 07:00,2014-03-08 17:00,2014-03-06 07:00,2014-03-08 17:00,2014-03-06 07:00,2014-03-08 17:00,2014-05-03 07:00,2014-05-04 17:00,,PT_Normal,,,,,cQPGN0m2QOWbqwbzjSnW4w,22EVjBwY3kC4uz9zaBa0Nw,,,N,0,0,,,2014-02-17 15:27,2014-03-01 17:09,admin,admin,
379,128022,6764,35320,6640,0,N,N,N,CP_Drtn,TT_Task,DT_FixedDrtn,TK_NotStart,HHI.1515,Weld Short Seams,,490,0,20,0,0,0,20,0,0,0,,,,2014-05-04 07:00,2014-05-05 17:00,,2014-03-08 07:00,2014-03-09 17:00,2014-03-08 07:00,2014-03-09 17:00,2014-03-08 07:00,2014-03-09 17:00,2014-05-04 07:00,2014-05-05 17:00,,PT_Normal,,,,,UpO6c0WURdmMQaB9Ec0TQA,HT+mKHUthEmYrZHYIONcsA,,,N,0,0,,,2014-02-17 15:27,2014-03-01 17:09,admin,admin,
380,128023,6764,35320,6640,0,N,N,N,CP_Drtn,TT_Task,DT_FixedDrtn,TK_NotStart,HHI.1516,Fit/Tack Bottom Plates-Long Seams,,490,0,20,0,0,0,20,0,0,0,,,,2014-05-06 07:00,2014-05-07 17:00,,2014-03-10 07:00,2014-03-11 17:00,2014-03-10 07:00,2014-03-11 17:00,2014-03-10 07:00,2014-03-11 17:00,2014-05-06 07:00,2014-05-07 17:00,,PT_Normal,,,,,2SBFcDc4Tpmk8zle0LUTTg,2b87sw4sh0eU2TycY3KUNg,,,N,0,0,,,2014-02-17 15:27,2014-03-01 17:09,admin,admin,
381,128024,6764,35320,6640,0,N,N,N,CP_Drtn,TT_Task,DT_FixedDrtn,TK_NotStart,HHI.1517,Weld Long Seams,,490,0,40,0,0,0,40,0,0,0,,,,2014-05-07 07:00,2014-05-11 17:00,,2014-03-11 07:00,2014-03-15 17:00,2014-03-11 07:00,2014-03-15 17:00,2014-03-11 07:00,2014-03-15 17:00,2014-05-07 07:00,2014-05-11 17:00,,PT_Normal,,,,,0bGKx294QpGUabLuS43QBA,TwZLoLmNekG/crL1+T+wQw,,,N,0,0,,,2014-02-17 15:27,2014-03-01 17:09,admin,admin,
382,128025,6764,35322,6640,0,N,N,N,CP_Drtn,TT_Task,DT_FixedDrtn,TK_NotStart,HHI.1683,Erect & Tack Shell Course # 8 & Install Stagging Brackets,,450,0,10,0,420,420,10,32,0,32,,,,2014-10-08 16:00,2014-10-09 16:00,,2014-08-16 16:00,2014-08-17 16:00,2014-08-16 16:00,2014-08-17 16:00,2014-08-16 16:00,2014-08-17 16:00,2014-10-08 16:00,2014-10-09 16:00,,PT_Normal,,,,,7WKWoPfsQhW4Bh16nfDLjw,FwGEKCAF9E2UM/zfGG7lEQ,,,N,0,0,,,2014-02-17 15:27,2014-03-01 17:09,admin,admin,
383,128026,6764,35322,6640,0,N,N,N,CP_Drtn,TT_Task,DT_FixedDrtn,TK_NotStart,HHI.1684,Weld Outer Vertical Seam /Install the Stairways support on Shell,,450,0,10,0,170.666666,170.666666,10,42.666666,0,42.666666,,,,2014-10-09 16:00,2014-10-11 16:00,,2014-08-17 16:00,2014-08-18 16:00,2014-08-17 16:00,2014-08-18 16:00,2014-08-17 16:00,2014-08-18 16:00,2014-10-09 16:00,2014-10-11 16:00,,PT_Normal,,,,,nhdTu0akTBWY9H4Nl4IFGA,fNVZPc+q1kyrlHCPnBNqTw,,,N,0,0,,,2014-02-17 15:27,2014-03-01 17:09,admin,admin,
384,128027,6764,35322,6640,0,N,N,N,CP_Drtn,TT_Task,DT_FixedDrtn,TK_NotStart,HHI.1685,Backgouge & NDT Inside Vertical Seam,,450,0,10,0,90.666666,90.666666,10,42.666666,0,42.666666,,,,2014-10-11 16:00,2014-10-12 16:00,,2014-08-18 16:00,2014-08-19 16:00,2014-08-18 16:00,2014-08-19 16:00,2014-08-18 16:00,2014-08-19 16:00,2014-10-11 16:00,2014-10-12 16:00,,PT_Normal,,,,,/AYm1wQlQH+LrOW7rWzRUQ,BE2XLtpX5EW6cfrUZDwRHg,,,N,0,0,,,2014-02-17 15:27,2014-03-01 17:09,admin,admin,
385,128028,6764,35322,6640,0,N,N,N,CP_Drtn,TT_Task,DT_FixedDrtn,TK_NotStart,HHI.1686,Weld Inside Vertical Seam,,450,0,10,0,170.666666,170.666666,10,42.666666,0,42.666666,,,,2014-10-12 16:00,2014-10-13 16:00,,2014-08-19 16:00,2014-08-20 16:00,2014-08-19 16:00,2014-08-20 16:00,2014-08-19 16:00,2014-08-20 16:00,2014-10-12 16:00,2014-10-13 16:00,,PT_Normal,,,,,nKOutrW2TGq/YeAC1vH4HQ,BC48LwVPTE6yfmCQSO39EQ,,,N,0,0,,,2014-02-17 15:27,2014-03-01 17:09,admin,admin,
386,128029,6764,35322,6640,0,N,N,N,CP_Drtn,TT_Task,DT_FixedDrtn,TK_NotStart,HHI.1687,"""""Weld Outer Horizontal Seam between Shell Course # 7 & 8",,450,0,10,0,167.111111,167.111111,10,33.066667,0,33.066667,,,,2014-10-13 16:00,2014-10-14 16:00,,2014-08-20 16:00,2014-08-21 16:00,2014-08-20 16:00,2014-08-21 16:00,2014-08-20 16:00,2014-08-21 16:00,2014-10-13 16:00,2014-10-14 16:00,,PT_Normal,,,,,y2Hj/M0GQJKqoW7DbL5jAg,zrTQnGBJGkaIeBLCURKSxg,,,N,0,0,,,2014-02-17 15:27,2014-03-01 17:09,admin,admin,
387,128030,6764,35322,6640,0,N,N,N,CP_Drtn,TT_Task,DT_FixedDrtn,TK_NotStart,HHI.1688,"""""Backgouge & NDT Inside Horizontal Seam between Shell Course# 7 & 8",,450,0,10,0,111.999998,111.999998,10,42.666667,0,42.666667,,,,2014-10-14 16:00,2014-10-15 16:00,,2014-08-21 16:00,2014-08-23 11:00,2014-08-21 16:00,2014-08-23 11:00,2014-08-21 16:00,2014-08-23 11:00,2014-10-14 16:00,2014-10-15 16:00,,PT_Normal,,,,,/iY1cvSeSl6gIQJEuA+jHA,5TbxDzMEKkaCQp4Y+g/ISg,,,N,0,0,,,2014-02-17 15:27,2014-03-01 17:09,admin,admin,
388,128031,6764,35322,6640,0,N,N,N,CP_Drtn,TT_Task,DT_FixedDrtn,TK_NotStart,HHI.1689,Weld Inner Horizontal Seam between Shell Course # 7 & 8,,450,0,10,0,188.444444,188.444444,10,33.066667,0,33.066667,,,,2014-10-15 16:00,2014-10-16 16:00,,2014-08-23 11:00,2014-08-24 11:00,2014-08-23 11:00,2014-08-24 11:00,2014-08-23 11:00,2014-08-24 11:00,2014-10-15 16:00,2014-10-16 16:00,,PT_Normal,,,,,bCEySMB+Qc+CzIgE3dE+DA,tdDJZWlR7UiHU/B35jeFFQ,,,N,0,0,,,2014-02-17 15:27,2014-03-01 17:09,admin,admin,
389,128032,6764,35322,6640,0,N,N,N,CP_Drtn,TT_Task,DT_FixedDrtn,TK_NotStart,HHI.1691,Quailty Check(Visual Inspection & PT& Air Leak Test for Shell Nozzle & Pad),,500,0,70,0,55.555555,55.555555,70,33.066667,0,33.066667,,,,2014-10-14 16:00,2014-10-22 16:00,,2014-08-16 16:00,2014-08-24 11:00,2014-08-16 16:00,2014-08-24 11:00,2014-08-16 16:00,2014-08-24 11:00,2014-10-14 16:00,2014-10-22 16:00,,PT_Normal,,,,,AvAtVW2dTuedc5whXv1qeQ,aqDQWgkssEy2vleLt4BMdA,,,N,0,0,,,2014-02-17 15:27,2014-03-01 17:09,admin,admin,
390,128033,6764,35322,6640,0,N,N,N,CP_Drtn,TT_Task,DT_FixedDrtn,TK_NotStart,HHI.1690,"Fit,Weld Nozzle on Shell",,500,0,10,0,0,0,10,0,0,0,,,,2014-10-21 16:00,2014-10-22 16:00,,2014-08-23 11:00,2014-08-24 11:00,2014-08-23 11:00,2014-08-24 11:00,2014-08-23 11:00,2014-08-24 11:00,2014-10-21 16:00,2014-10-22 16:00,,PT_Normal,,,,,+aFRCSiZRGCAxBfCxmW4Zw,KhiljxtS6Um7dlUyMDZqnQ,,,N,0,0,,,2014-02-17 15:27,2014-03-01 17:09,admin,admin,
391,128034,6764,35323,6640,0,N,N,N,CP_Drtn,TT_Task,DT_FixedDrtn,TK_NotStart,HHI.1692,Erect & Tack Shell Course # 8 & Install Stagging Brackets,,500,50,10,0,400,400,10,48,0,48,,,,2014-10-16 16:00,2014-10-18 16:00,,2014-08-18 16:00,2014-08-19 16:00,2014-08-18 16:00,2014-08-19 16:00,2014-08-18 16:00,2014-08-19 16:00,2014-10-16 16:00,2014-10-18 16:00,,PT_Normal,,,,,BsFdI9KESKOPSQbRsRV7SA,elAgm00Y6ke2OzAyN7XcMg,,,N,0,0,,,2014-02-17 15:27,2014-03-01 17:09,admin,admin,
392,128035,6764,35323,6640,0,N,N,N,CP_Drtn,TT_Task,DT_FixedDrtn,TK_NotStart,HHI.1693,Weld Outer Vertical Seam/Install the Stairways support on Shell,,450,0,10,0,160,160,10,42.666666,0,42.666666,,,,2014-10-16 16:00,2014-10-18 16:00,,2014-08-24 11:00,2014-08-25 11:00,2014-08-24 11:00,2014-08-25 11:00,2014-08-24 11:00,2014-08-25 11:00,2014-10-16 16:00,2014-10-18 16:00,,PT_Normal,,,,,zgHYwwYMQH6CPEFUuTjHWQ,gKdIxo/1Z06v7ujtlN7bxQ,,,N,0,0,,,2014-02-17 15:27,2014-03-01 17:09,admin,admin,
393,128036,6764,35323,6640,0,N,N,N,CP_Drtn,TT_Task,DT_FixedDrtn,TK_NotStart,HHI.1694,Backgouge & NDT Inside Vertical Seam,,450,0,10,0,90.666666,90.666666,10,42.666666,0,42.666666,,,,2014-10-18 16:00,2014-10-19 16:00,,2014-08-25 11:00,2014-08-26 11:00,2014-08-25 11:00,2014-08-26 11:00,2014-08-25 11:00,2014-08-26 11:00,2014-10-18 16:00,2014-10-19 16:00,,PT_Normal,,,,,z/02HoaRQyyh8cOgX7DK0g,LYmaucIAJ0ertovwl65QOg,,,N,0,0,,,2014-02-17 15:27,2014-03-01 17:09,admin,admin,
394,128037,6764,35323,6640,0,N,N,N,CP_Drtn,TT_Task,DT_FixedDrtn,TK_NotStart,HHI.1695,Weld Inside Vertical Seam,,450,0,10,0,160,160,10,42.666666,0,42.666666,,,,2014-10-19 16:00,2014-10-20 16:00,,2014-08-26 11:00,2014-08-27 11:00,2014-08-26 11:00,2014-08-27 11:00,2014-08-26 11:00,2014-08-27 11:00,2014-10-19 16:00,2014-10-20 16:00,,PT_Normal,,,,,Ggry2OHDTbO18X//7A1jeA,Lgm3LfXVL0GA3gAI1qczpQ,,,N,0,0,,,2014-02-17 15:27,2014-03-01 17:09,admin,admin,
395,128038,6764,35323,6640,0,N,N,N,CP_Drtn,TT_Task,DT_FixedDrtn,TK_NotStart,HHI.1696,"""""Weld Outer Horizontal Seam between Shell Course # 7 & 8",,450,0,10,0,160,160,10,33.066667,0,33.066667,,,,2014-10-20 16:00,2014-10-21 16:00,,2014-08-27 11:00,2014-08-28 11:00,2014-08-27 11:00,2014-08-28 11:00,2014-08-27 11:00,2014-08-28 11:00,2014-10-20 16:00,2014-10-21 16:00,,PT_Normal,,,,,9cStAwZ+S4K6BJJ8pl9LsA,FmJZKCsTb0+ngJPJOKAxdg,,,N,0,0,,,2014-02-17 15:27,2014-03-01 17:09,admin,admin,
396,128039,6764,35323,6640,0,N,N,N,CP_Drtn,TT_Task,DT_FixedDrtn,TK_NotStart,HHI.1697,"""""Backgouge & NDT Inside Horizontal Seam between Shell Course#7 & 8",,450,0,10,0,122.666664,122.666664,10,42.666667,0,42.666667,,,,2014-10-21 16:00,2014-10-22 16:00,,2014-08-28 11:00,2014-08-29 13:30,2014-08-28 11:00,2014-08-29 13:30,2014-08-28 11:00,2014-08-29 13:30,2014-10-21 16:00,2014-10-22 16:00,,PT_Normal,,,,,/eW/ENR3T0SsADsi2qiqgw,4Mc1yjZlYUSfXNW8KpOl9w,,,N,0,0,,,2014-02-17 15:27,2014-03-01 17:09,admin,admin,
397,128040,6764,35323,6640,0,N,N,N,CP_Drtn,TT_Task,DT_FixedDrtn,TK_NotStart,HHI.1698,Weld Inner Horizontal Seam between Shell Course #7 & 8,,450,0,10,0,188.444444,188.444444,10,33.066667,0,33.066667,,,,2014-10-22 16:00,2014-10-23 16:00,,2014-08-29 13:30,2014-08-30 16:00,2014-08-29 13:30,2014-08-30 16:00,2014-08-29 13:30,2014-08-30 16:00,2014-10-22 16:00,2014-10-23 16:00,,PT_Normal,,,,,RZrOCkYDRKC3ytfOwSLg1A,6tqBafzKxkeE0UvoXUZIlg,,,N,0,0,,,2014-02-17 15:27,2014-03-01 17:09,admin,admin,
398,128041,6764,35323,6640,0,N,N,N,CP_Drtn,TT_Task,DT_FixedDrtn,TK_NotStart,HHI.1700,Quailty Check(Visual Inspection & PT for Shell Nozzle & Pad),,450,0,60,0,55.555555,55.555555,60,33.066667,0,33.066667,,,,2014-10-16 16:00,2014-10-23 16:00,,2014-08-24 11:00,2014-08-30 16:00,2014-08-24 11:00,2014-08-30 16:00,2014-08-24 11:00,2014-08-30 16:00,2014-10-16 16:00,2014-10-23 16:00,,PT_Normal,,,,,/ENI8qckSLiC/3ZPaoWqpg,hVpYldWMcEOA0jgEan6hkQ,,,N,0,0,,,2014-02-17 15:27,2014-03-01 17:09,admin,admin,
399,128042,6764,35323,6640,0,N,N,N,CP_Drtn,TT_Task,DT_FixedDrtn,TK_NotStart,HHI.1699,"Fit,Weld Nozzle on Shell",,450,0,10,0,0,0,10,0,0,0,,,,2014-10-22 16:00,2014-10-23 16:00,,2014-08-29 13:30,2014-08-30 16:00,2014-08-29 13:30,2014-08-30 16:00,2014-08-29 13:30,2014-08-30 16:00,2014-10-22 16:00,2014-10-23 16:00,,PT_Normal,,,,,fNpvKj5ZRyOXO1URI6gFqw,aTZhcoJy+0W6wwKGYZDSIA,,,N,0,0,,,2014-02-17 15:27,2014-03-01 17:09,admin,admin,
400,128043,6764,35324,6640,0,N,N,N,CP_Drtn,TT_Task,DT_FixedDrtn,TK_NotStart,HHI.1701,Perform RT for Tank#1 & #2,,450,0,10,0,0,0,10,0,0,0,,,,2014-10-23 16:00,2014-10-25 16:00,,2014-08-30 16:00,2014-08-31 16:00,2014-08-30 16:00,2014-08-31 16:00,2014-08-30 16:00,2014-08-31 16:00,2014-10-23 16:00,2014-10-25 16:00,,PT_Normal,,,,,HP6N9ASVTqiHFSb3cgqabw,BAnlUdZK7E6r8WembDI/pw,,,N,0,0,,,2014-02-17 15:27,2014-03-01 17:09,admin,admin,
401,128044,6764,35326,6640,0,N,N,N,CP_Drtn,TT_Task,DT_FixedDrtn,TK_NotStart,HHI.1612,Erect & Tack Shell Course # 5 & Install Stagging Brackets,,450,0,10,0,380,380,10,48,0,48,,,,2014-08-14 11:00,2014-08-15 13:30,,2014-06-10 07:00,2014-06-10 17:00,2014-06-10 07:00,2014-06-10 17:00,2014-06-10 07:00,2014-06-10 17:00,2014-08-14 11:00,2014-08-15 13:30,,PT_Normal,,,,,rj9vzkffSkyXK+aliRFlLg,zokvSMiXV0qWgrM7YpIZ9A,,,N,0,0,,,2014-02-17 15:27,2014-03-01 17:09,admin,admin,
402,128045,6764,35326,6640,0,N,N,N,CP_Drtn,TT_Task,DT_FixedDrtn,TK_NotStart,HHI.1613,Weld Outer Vertical Seam/Install the Stairways support on Shell,,450,0,10,0,167.111111,167.111111,10,33.066667,0,33.066667,,,,2014-08-15 13:30,2014-08-16 16:00,,2014-06-11 07:00,2014-06-11 17:00,2014-06-11 07:00,2014-06-11 17:00,2014-06-11 07:00,2014-06-11 17:00,2014-08-15 13:30,2014-08-16 16:00,,PT_Normal,,,,,HEtJlDbLS622Vqe/rf4udA,X7HwywpbsUma9Q5YOBYTLQ,,,N,0,0,,,2014-02-17 15:27,2014-03-01 17:09,admin,admin,
403,128046,6764,35326,6640,0,N,N,N,CP_Drtn,TT_Task,DT_FixedDrtn,TK_NotStart,HHI.1614,Backgouge & NDT Inside Vertical Seam,,450,0,10,0,90.666666,90.666666,10,42.666666,0,42.666666,,,,2014-08-16 16:00,2014-08-17 16:00,,2014-06-12 07:00,2014-06-12 17:00,2014-06-12 07:00,2014-06-12 17:00,2014-06-12 07:00,2014-06-12 17:00,2014-08-16 16:00,2014-08-17 16:00,,PT_Normal,,,,,3UVH7WdeTXeBtloSIHvqCQ,T5L9zAyEs0+4DPYjvz4jUA,,,N,0,0,,,2014-02-17 15:27,2014-03-01 17:09,admin,admin,
404,128047,6764,35326,6640,0,N,N,N,CP_Drtn,TT_Task,DT_FixedDrtn,TK_NotStart,HHI.1615,Weld Inside Vertical Seam,,450,0,10,0,160,160,10,33.066667,0,33.066667,,,,2014-08-17 16:00,2014-08-18 16:00,,2014-06-14 07:00,2014-06-14 17:00,2014-06-14 07:00,2014-06-14 17:00,2014-06-14 07:00,2014-06-14 17:00,2014-08-17 16:00,2014-08-18 16:00,,PT_Normal,,,,,LB90s2wSShaBGYwGN8wC0w,DHznS3VqzESu0H9DovZaiQ,,,N,0,0,,,2014-02-17 15:27,2014-03-01 17:09,admin,admin,
405,128048,6764,35326,6640,0,N,N,N,CP_Drtn,TT_Task,DT_FixedDrtn,TK_NotStart,HHI.1616,"""""Weld Outer Horizontal Seam between Shell Course # 4 & 5""""",,450,0,10,0,320,320,10,85.333334,0,85.333334,,,,2014-08-18 16:00,2014-08-19 16:00,,2014-06-15 07:00,2014-06-15 17:00,2014-06-15 07:00,2014-06-15 17:00,2014-06-15 07:00,2014-06-15 17:00,2014-08-18 16:00,2014-08-19 16:00,,PT_Normal,,,,,4NTqi29fQ8O3+UoINjTXtw,5xNkEJX+506j2s2pXJwTeg,,,N,0,0,,,2014-02-17 15:27,2014-03-01 17:09,admin,admin,
406,128049,6764,35326,6640,0,N,N,N,CP_Drtn,TT_Task,DT_FixedDrtn,TK_NotStart,HHI.1617,"""""Backgouge & NDT Inside Horizontal Seam between Shell Course# 4 & 5""""",,450,0,10,0,80,80,10,33.066667,0,33.066667,,,,2014-08-19 16:00,2014-08-20 16:00,,2014-06-16 07:00,2014-06-16 17:00,2014-06-16 07:00,2014-06-16 17:00,2014-06-16 07:00,2014-06-16 17:00,2014-08-19 16:00,2014-08-20 16:00,,PT_Normal,,,,,Gi95yAoFQxm132N5joL6kw,0wbRW7YUYkCMo3tCA7ZJog,,,N,0,0,,,2014-02-17 15:27,2014-03-01 17:09,admin,admin,
407,128050,6764,35326,6640,0,N,N,N,CP_Drtn,TT_Task,DT_FixedDrtn,TK_NotStart,HHI.1618,"Weld Inner Horizontal Seam between Shell Course # 4 & 5""""",,450,0,10,0,405.333336,405.333336,10,85.333333,0,85.333333,,,,2014-08-20 16:00,2014-08-21 16:00,,2014-06-17 07:00,2014-06-17 17:00,2014-06-17 07:00,2014-06-17 17:00,2014-06-17 07:00,2014-06-17 17:00,2014-08-20 16:00,2014-08-21 16:00,,PT_Normal,,,,,AWpr7hVdRMmFxoyLf9YnBg,NJQt6750lk2L5HffQk6r1A,,,N,0,0,,,2014-02-17 15:27,2014-03-01 17:09,admin,admin,
408,128051,6764,35326,6640,0,N,N,N,CP_Drtn,TT_Task,DT_FixedDrtn,TK_NotStart,HHI.1620,"Quailty Check(Visual Inspection,PT,Air Leak Test for Shell Nozzle)",,450,0,70,0,27.111111,27.111111,70,33.066667,0,33.066667,,,,2014-08-14 11:00,2014-08-21 16:00,,2014-06-10 07:00,2014-06-17 17:00,2014-06-10 07:00,2014-06-17 17:00,2014-06-10 07:00,2014-06-17 17:00,2014-08-14 11:00,2014-08-21 16:00,,PT_Normal,,,,,R4DHQojIQrWG8Fn1gRla6g,CDE/W684BEe3zP/gdhvlbQ,,,N,0,0,,,2014-02-17 15:27,2014-03-01 17:09,admin,admin,
409,128052,6764,35326,6640,0,N,N,N,CP_Drtn,TT_Task,DT_FixedDrtn,TK_NotStart,HHI.1619,"Fit,Weld Nozzle on Shell",,450,0,10,0,0,0,10,0,0,0,,,,2014-08-20 16:00,2014-08-21 16:00,,2014-06-17 07:00,2014-06-17 17:00,2014-06-17 07:00,2014-06-17 17:00,2014-06-17 07:00,2014-06-17 17:00,2014-08-20 16:00,2014-08-21 16:00,,PT_Normal,,,,,QqVZA/PaT7WVxkQMh0UF4g,fbldQ+V3kkeOO57Zn+YcKg,,,N,0,0,,,2014-02-17 15:27,2014-03-01 17:09,admin,admin,
410,128053,6764,35327,6640,0,N,N,N,CP_Drtn,TT_Task,DT_FixedDrtn,TK_NotStart,HHI.1621,Erect & Tack Shell Course # 5 & Install Stagging Brackets,,450,0,10,0,440,440,10,48,0,48,,,,2014-08-16 16:00,2014-08-17 16:00,,2014-06-12 07:00,2014-06-12 17:00,2014-06-12 07:00,2014-06-12 17:00,2014-06-12 07:00,2014-06-12 17:00,2014-08-16 16:00,2014-08-17 16:00,,PT_Normal,,,,,El7T49fATjWedM6pAScjOQ,XF9HuEqJTk+xMROI85kPMw,,,N,0,0,,,2014-02-17 15:27,2014-03-01 17:09,admin,admin,
411,128054,6764,35327,6640,0,N,N,N,CP_Drtn,TT_Task,DT_FixedDrtn,TK_NotStart,HHI.1622,Weld Outer Vertical Seam/Install the Stairways support on Shell,,450,0,10,0,160,160,10,33.066667,0,33.066667,,,,2014-08-17 16:00,2014-08-18 16:00,,2014-06-14 07:00,2014-06-14 17:00,2014-06-14 07:00,2014-06-14 17:00,2014-06-14 07:00,2014-06-14 17:00,2014-08-17 16:00,2014-08-18 16:00,,PT_Normal,,,,,B2gVOIbwR8mgx/XnyEN5BQ,ncvS2WJTk0qqD9ZKZbweVg,,,N,0,0,,,2014-02-17 15:27,2014-03-01 17:09,admin,admin,
412,128055,6764,35327,6640,0,N,N,N,CP_Drtn,TT_Task,DT_FixedDrtn,TK_NotStart,HHI.1623,Backgouge & NDT Inside Vertical Seam,,450,0,10,0,80,80,10,42.666666,0,42.666666,,,,2014-08-18 16:00,2014-08-19 16:00,,2014-06-15 07:00,2014-06-15 17:00,2014-06-15 07:00,2014-06-15 17:00,2014-06-15 07:00,2014-06-15 17:00,2014-08-18 16:00,2014-08-19 16:00,,PT_Normal,,,,,dRrXYZIwThy52R0FITQErA,718hiQ1hQke6kH1IxJaayw,,,N,0,0,,,2014-02-17 15:27,2014-03-01 17:09,admin,admin,
413,128056,6764,35327,6640,0,N,N,N,CP_Drtn,TT_Task,DT_FixedDrtn,TK_NotStart,HHI.1624,Weld Inside Vertical Seam,,450,0,10,0,167.111111,167.111111,10,33.066667,0,33.066667,,,,2014-08-19 16:00,2014-08-20 16:00,,2014-06-16 07:00,2014-06-16 17:00,2014-06-16 07:00,2014-06-16 17:00,2014-06-16 07:00,2014-06-16 17:00,2014-08-19 16:00,2014-08-20 16:00,,PT_Normal,,,,,90NBWIXQTim4jbKFBSQ1gQ,ox4+y8pN606NC3h0OFzFuw,,,N,0,0,,,2014-02-17 15:27,2014-03-01 17:09,admin,admin,
414,128057,6764,35327,6640,0,N,N,N,CP_Drtn,TT_Task,DT_FixedDrtn,TK_NotStart,HHI.1625,"""""Weld Outer Horizontal Seam between Shell Course # 4 & 5""""",,450,0,10,0,341.333334,341.333334,10,85.333334,0,85.333334,,,,2014-08-20 16:00,2014-08-21 16:00,,2014-06-17 07:00,2014-06-17 17:00,2014-06-17 07:00,2014-06-17 17:00,2014-06-17 07:00,2014-06-17 17:00,2014-08-20 16:00,2014-08-21 16:00,,PT_Normal,,,,,2iaEyxy2RzeZ4IQgCwFWIQ,qT0/hPfIAU+2BGAaaR3+Dw,,,N,0,0,,,2014-02-17 15:27,2014-03-01 17:09,admin,admin,
415,128058,6764,35327,6640,0,N,N,N,CP_Drtn,TT_Task,DT_FixedDrtn,TK_NotStart,HHI.1626,"""""Backgouge & NDT Inside Horizontal Seam between Shell Course# 4 & 5""""",,450,0,10,0,108.444444,108.444444,10,33.066667,0,33.066667,,,,2014-08-21 16:00,2014-08-23 11:00,,2014-06-18 07:00,2014-06-18 17:00,2014-06-18 07:00,2014-06-18 17:00,2014-06-18 07:00,2014-06-18 17:00,2014-08-21 16:00,2014-08-23 11:00,,PT_Normal,,,,,O4iqj0FWQKOpQcUWQzn/ag,b8wyDlfYdku5DrbHbeSbVw,,,N,0,0,,,2014-02-17 15:27,2014-03-01 17:09,admin,admin,
416,128059,6764,35327,6640,0,N,N,N,CP_Drtn,TT_Task,DT_FixedDrtn,TK_NotStart,HHI.1627,"Weld Inner Horizontal Seam between Shell Course #4 & 5""""",,450,0,10,0,405.333336,405.333336,10,85.333333,0,85.333333,,,,2014-08-23 11:00,2014-08-24 11:00,,2014-06-19 07:00,2014-06-19 17:00,2014-06-19 07:00,2014-06-19 17:00,2014-06-19 07:00,2014-06-19 17:00,2014-08-23 11:00,2014-08-24 11:00,,PT_Normal,,,,,6TvED1qJTDGmJZyZJYzdTQ,bIK42eKCGkucxzIK4MdLLw,,,N,0,0,,,2014-02-17 15:27,2014-03-01 17:09,admin,admin,
417,128060,6764,35327,6640,0,N,N,N,CP_Drtn,TT_Task,DT_FixedDrtn,TK_NotStart,HHI.1629,"Quailty Check(Visual Inspection,PT,Air Leak Test for Shell Nozzle)",,450,0,70,0,55.555555,55.555555,70,33.066667,0,33.066667,,,,2014-08-16 16:00,2014-08-24 11:00,,2014-06-12 07:00,2014-06-19 17:00,2014-06-12 07:00,2014-06-19 17:00,2014-06-12 07:00,2014-06-19 17:00,2014-08-16 16:00,2014-08-24 11:00,,PT_Normal,,,,,ClfZiT8PSr6yW+VWyCGAhw,VhOTqBz2FEW6AF7zy+/IEw,,,N,0,0,,,2014-02-17 15:27,2014-03-01 17:09,admin,admin,
418,128061,6764,35327,6640,0,N,N,N,CP_Drtn,TT_Task,DT_FixedDrtn,TK_NotStart,HHI.1628,"Fit,Weld Nozzle on Shell",,450,0,10,0,0,0,10,0,0,0,,,,2014-08-23 11:00,2014-08-24 11:00,,2014-06-19 07:00,2014-06-19 17:00,2014-06-19 07:00,2014-06-19 17:00,2014-06-19 07:00,2014-06-19 17:00,2014-08-23 11:00,2014-08-24 11:00,,PT_Normal,,,,,Qk3FKAe2RmOD7uGw19QcvA,fbldQ+V3kkeOO57Zn+YcKg,,,N,0,0,,,2014-02-17 15:27,2014-03-01 17:09,admin,admin,
419,128062,6764,35328,6640,0,N,N,N,CP_Drtn,TT_Task,DT_FixedDrtn,TK_NotStart,HHI.1630,Perform RT for Tank#1 & #2,,450,0,10,0,0,0,10,0,0,0,,,,2014-08-24 11:00,2014-08-25 11:00,,2014-06-21 07:00,2014-06-21 17:00,2014-06-21 07:00,2014-06-21 17:00,2014-06-21 07:00,2014-06-21 17:00,2014-08-24 11:00,2014-08-25 11:00,,PT_Normal,,,,,b/GJVjKJRcivtQcDJvDJXg,44iK/fYlyUe0fGj/BLD+2w,,,N,0,0,,,2014-02-17 15:27,2014-03-01 17:09,admin,admin,
420,128063,6764,35330,6640,0,N,N,N,CP_Drtn,TT_Task,DT_FixedDrtn,TK_NotStart,HHI.1577,Erect & Tack Shell Course # 3 & Install Stagging Brackets,,450,0,10,0,560,560,10,48,0,48,,,,2014-07-05 13:00,2014-07-07 11:00,,2014-05-11 07:00,2014-05-11 17:00,2014-05-11 07:00,2014-05-11 17:00,2014-05-11 07:00,2014-05-11 17:00,2014-07-05 13:00,2014-07-07 11:00,,PT_Normal,,,,,2n/ph4zfTbm5KTrIf1Gd3w,0/CCcsAshEaLCdgcd1ZM0A,,,N,0,0,,,2014-02-17 15:27,2014-03-01 17:09,admin,admin,
421,128064,6764,35330,6640,0,N,N,N,CP_Drtn,TT_Task,DT_FixedDrtn,TK_NotStart,HHI.1578,Weld Outer Vertical Seam/Install the Stairways support on Shell,,450,0,10,0,202.666668,202.666668,10,85.333333,0,85.333333,,,,2014-07-07 11:00,2014-07-08 15:00,,2014-05-12 07:00,2014-05-12 17:00,2014-05-12 07:00,2014-05-12 17:00,2014-05-12 07:00,2014-05-12 17:00,2014-07-07 11:00,2014-07-08 15:00,,PT_Normal,,,,,lRdUoE4tTSKzYX6Fj51jhg,oZgMm3dmYkWkbxSEoYxO8A,,,N,0,0,,,2014-02-17 15:27,2014-03-01 17:09,admin,admin,
422,128065,6764,35330,6640,0,N,N,N,CP_Drtn,TT_Task,DT_FixedDrtn,TK_NotStart,HHI.1579,Backgouge & NDT Inside Vertical Seam,,450,0,10,0,108.444444,108.444444,10,33.066667,0,33.066667,,,,2014-07-09 09:00,2014-07-10 13:00,,2014-05-13 07:00,2014-05-13 17:00,2014-05-13 07:00,2014-05-13 17:00,2014-05-13 07:00,2014-05-13 17:00,2014-07-09 09:00,2014-07-10 13:00,,PT_Normal,,,,,qwb+WOjoSuSxXjGGigjkhA,mZjxS0xfKUer9EF0EofOAw,,,N,0,0,,,2014-02-17 15:27,2014-03-01 17:09,admin,admin,
423,128066,6764,35330,6640,0,N,N,N,CP_Drtn,TT_Task,DT_FixedDrtn,TK_NotStart,HHI.1580,Weld Inside Vertical Seam,,450,0,10,0,202.666668,202.666668,10,85.333333,0,85.333333,,,,2014-07-10 13:00,2014-07-13 11:00,,2014-05-14 07:00,2014-05-14 17:00,2014-05-14 07:00,2014-05-14 17:00,2014-05-14 07:00,2014-05-14 17:00,2014-07-10 13:00,2014-07-13 11:00,,PT_Normal,,,,,yBIEqRxSRA6H47QHk4zlsQ,CG9Y20RCu0iCCbvC5fM+Bw,,,N,0,0,,,2014-02-17 15:27,2014-03-01 17:09,admin,admin,
424,128067,6764,35330,6640,0,N,N,N,CP_Drtn,TT_Task,DT_FixedDrtn,TK_NotStart,HHI.1581,"Weld Outer Horizontal Seam between Shell Course # 2 & 3""""",,450,0,10,0,608,608,10,128,0,128,,,,2014-07-13 11:00,2014-07-14 15:00,,2014-05-15 07:00,2014-05-15 17:00,2014-05-15 07:00,2014-05-15 17:00,2014-05-15 07:00,2014-05-15 17:00,2014-07-13 11:00,2014-07-14 15:00,,PT_Normal,,,,,C2q8W+WBSDWO4sQbkyHHlQ,pfnsIwl6j0yy8Sf5jQfpjQ,,,N,0,0,,,2014-02-17 15:27,2014-03-01 17:09,admin,admin,
425,128068,6764,35330,6640,0,N,N,N,CP_Drtn,TT_Task,DT_FixedDrtn,TK_NotStart,HHI.1582,"Backgouge & NDT Inside Horizontal Seam between Shell Course# 2 & 3""""",,450,0,10,0,108.444444,108.444444,10,33.066667,0,33.066667,,,,2014-07-15 09:00,2014-07-16 13:00,,2014-05-17 07:00,2014-05-17 17:00,2014-05-17 07:00,2014-05-17 17:00,2014-05-17 07:00,2014-05-17 17:00,2014-07-15 09:00,2014-07-16 13:00,,PT_Normal,,,,,bgG7vJUeSg2s1AXK215zMA,lcQyCh9L9UKbMq2JiHtOOg,,,N,0,0,,,2014-02-17 15:27,2014-03-01 17:09,admin,admin,
426,128069,6764,35330,6640,0,N,N,N,CP_Drtn,TT_Task,DT_FixedDrtn,TK_NotStart,HHI.1583,"Weld Inner Horizontal Seam between Shell Course # 2 & 3""""",,450,0,10,0,608,608,10,128,0,128,,,,2014-07-16 13:00,2014-07-19 11:00,,2014-05-18 07:00,2014-05-18 17:00,2014-05-18 07:00,2014-05-18 17:00,2014-05-18 07:00,2014-05-18 17:00,2014-07-16 13:00,2014-07-19 11:00,,PT_Normal,,,,,5OoaRu7GQ3qoNqrvqI48PA,oVpCtP9DGEWc6UgoNsROCg,,,N,0,0,,,2014-02-17 15:27,2014-03-01 17:09,admin,admin,
427,128070,6764,35330,6640,0,N,N,N,CP_Drtn,TT_Task,DT_FixedDrtn,TK_NotStart,HHI.1584,Quailty Check(Visual Inspection),,450,0,70,0,32,32,70,42.666666,0,42.666666,,,,2014-07-05 13:00,2014-07-19 11:00,,2014-05-11 07:00,2014-05-18 17:00,2014-05-11 07:00,2014-05-18 17:00,2014-05-11 07:00,2014-05-18 17:00,2014-07-05 13:00,2014-07-19 11:00,,PT_Normal,,,,,1GsiHxdyTtm3S2cq1CXXXg,kcAJTdCoA0yVnpjEkpuokQ,,,N,0,0,,,2014-02-17 15:27,2014-03-01 17:09,admin,admin,
428,128071,6764,35331,6640,0,N,N,N,CP_Drtn,TT_Task,DT_FixedDrtn,TK_NotStart,HHI.1585,Perform RT for Tank#1 & #2,,450,0,10,0,0,0,10,0,0,0,,,,2014-07-19 11:00,2014-07-20 15:00,,2014-05-19 07:00,2014-05-19 17:00,2014-05-19 07:00,2014-05-19 17:00,2014-05-19 07:00,2014-05-19 17:00,2014-07-19 11:00,2014-07-20 15:00,,PT_Normal,,,,,HkxPPOzyQa6vo/aIT862wA,vpaxtpm4CUalH3jbo2w8sw,,,N,0,0,,,2014-02-17 15:27,2014-03-01 17:09,admin,admin,
429,128072,6764,35332,6640,0,N,N,N,CP_Drtn,TT_Task,DT_FixedDrtn,TK_NotStart,HHI.1569,Erect & Tack Shell Course # 3 & Install Stagging Brackets,,450,0,10,0,500,500,10,48,0,48,,,,2014-07-01 11:00,2014-07-02 15:00,,2014-05-08 07:00,2014-05-08 17:00,2014-05-08 07:00,2014-05-08 17:00,2014-05-08 07:00,2014-05-08 17:00,2014-07-01 11:00,2014-07-02 15:00,,PT_Normal,,,,,qLPzyL6pThC+AzRgPVTKSw,PX/xdotAYE2zLaP3gObeRA,,,N,0,0,,,2014-02-17 15:27,2014-03-01 17:09,admin,admin,
430,128073,6764,35332,6640,0,N,N,N,CP_Drtn,TT_Task,DT_FixedDrtn,TK_NotStart,HHI.1570,Weld Outer Vertical Seam/Install the Stairways support on Shell,,450,0,10,0,160,160,10,85.333334,0,85.333334,,,,2014-07-03 09:00,2014-07-05 13:00,,2014-05-10 07:00,2014-05-10 17:00,2014-05-10 07:00,2014-05-10 17:00,2014-05-10 07:00,2014-05-10 17:00,2014-07-03 09:00,2014-07-05 13:00,,PT_Normal,,,,,/hrGxh/7Sj6akIo4fvb3Sg,kVsvPPuzI02s1bfGioP8Cw,,,N,0,0,,,2014-02-17 15:27,2014-03-01 17:09,admin,admin,
431,128074,6764,35332,6640,0,N,N,N,CP_Drtn,TT_Task,DT_FixedDrtn,TK_NotStart,HHI.1571,Backgouge & NDT Inside Vertical Seam,,450,0,10,0,80,80,10,33.066667,0,33.066667,,,,2014-07-05 13:00,2014-07-07 11:00,,2014-05-11 07:00,2014-05-11 17:00,2014-05-11 07:00,2014-05-11 17:00,2014-05-11 07:00,2014-05-11 17:00,2014-07-05 13:00,2014-07-07 11:00,,PT_Normal,,,,,VVHT0NJOTVSaNn0TDMO0hg,G9Qry2CzGkeQ/WW51odXRQ,,,N,0,0,,,2014-02-17 15:27,2014-03-01 17:09,admin,admin,
432,128075,6764,35332,6640,0,N,N,N,CP_Drtn,TT_Task,DT_FixedDrtn,TK_NotStart,HHI.1572,Weld Inside Vertical Seam,,450,0,10,0,202.666668,202.666668,10,85.333333,0,85.333333,,,,2014-07-07 11:00,2014-07-08 15:00,,2014-05-12 07:00,2014-05-12 17:00,2014-05-12 07:00,2014-05-12 17:00,2014-05-12 07:00,2014-05-12 17:00,2014-07-07 11:00,2014-07-08 15:00,,PT_Normal,,,,,PJAXbg3VS/28/5vhbB8FcQ,8f6GAWWn90OiHGU60PSL7Q,,,N,0,0,,,2014-02-17 15:27,2014-03-01 17:09,admin,admin,
433,128076,6764,35332,6640,0,N,N,N,CP_Drtn,TT_Task,DT_FixedDrtn,TK_NotStart,HHI.1573,"Weld Outer Horizontal Seam between Shell Course # 2 & 3""""",,450,0,10,0,608,608,10,128,0,128,,,,2014-07-09 09:00,2014-07-10 13:00,,2014-05-13 07:00,2014-05-13 17:00,2014-05-13 07:00,2014-05-13 17:00,2014-05-13 07:00,2014-05-13 17:00,2014-07-09 09:00,2014-07-10 13:00,,PT_Normal,,,,,QIFuomkYRtWK6I38q3erNQ,xDwB60Z2AE64RUPBogOCxA,,,N,0,0,,,2014-02-17 15:27,2014-03-01 17:09,admin,admin,
434,128077,6764,35332,6640,0,N,N,N,CP_Drtn,TT_Task,DT_FixedDrtn,TK_NotStart,HHI.1574,"Backgouge & NDT Inside Horizontal Seam between Shell Course# 2 & 3""""",,450,0,10,0,87.111111,87.111111,10,33.066667,0,33.066667,,,,2014-07-10 13:00,2014-07-13 11:00,,2014-05-14 07:00,2014-05-14 17:00,2014-05-14 07:00,2014-05-14 17:00,2014-05-14 07:00,2014-05-14 17:00,2014-07-10 13:00,2014-07-13 11:00,,PT_Normal,,,,,87ryLWXiRneCNfIEMv3FEA,UFhrPthHLUWBk+jtQcbArA,,,N,0,0,,,2014-02-17 15:27,2014-03-01 17:09,admin,admin,
435,128078,6764,35332,6640,0,N,N,N,CP_Drtn,TT_Task,DT_FixedDrtn,TK_NotStart,HHI.1575,"Weld Inner Horizontal Seam between Shell Course # 2 & 3""""",,450,0,10,0,608,608,10,128,0,128,,,,2014-07-13 11:00,2014-07-14 15:00,,2014-05-15 07:00,2014-05-15 17:00,2014-05-15 07:00,2014-05-15 17:00,2014-05-15 07:00,2014-05-15 17:00,2014-07-13 11:00,2014-07-14 15:00,,PT_Normal,,,,,UwXGLCEMRwWWju/CHH1XJA,O5bCE08y2Eq+Ab8iDoSmHQ,,,N,0,0,,,2014-02-17 15:27,2014-03-01 17:09,admin,admin,
436,128079,6764,35332,6640,0,N,N,N,CP_Drtn,TT_Task,DT_FixedDrtn,TK_NotStart,HHI.1576,Quailty Check(Visual Inspection),,450,0,70,0,27.111111,27.111111,70,33.066667,0,33.066667,,,,2014-07-01 11:00,2014-07-14 15:00,,2014-05-08 07:00,2014-05-15 17:00,2014-05-08 07:00,2014-05-15 17:00,2014-05-08 07:00,2014-05-15 17:00,2014-07-01 11:00,2014-07-14 15:00,,PT_Normal,,,,,xoScmiChQnKA/14JrhFRdQ,Zy1dxDyAIUeZCXRyHB0HlQ,,,N,0,0,,,2014-02-17 15:27,2014-03-01 17:09,admin,admin,
437,128080,6764,35334,6640,0,N,N,N,CP_Drtn,TT_Task,DT_FixedDrtn,TK_NotStart,HHI.1586,Erect & Tack Shell Course # 4 & Install Stagging Brackets,,450,0,10,0,480,480,10,48,0,48,,,,2014-07-19 11:00,2014-07-20 15:00,,2014-05-19 07:00,2014-05-19 17:00,2014-05-19 07:00,2014-05-19 17:00,2014-05-19 07:00,2014-05-19 17:00,2014-07-19 11:00,2014-07-20 15:00,,PT_Normal,,,,,9HNAQxRUTYeTfmjD0UsyDQ,8JgC/cC7wU+s+DH7ET9/gQ,,,N,0,0,,,2014-02-17 15:27,2014-03-01 17:09,admin,admin,
438,128081,6764,35334,6640,0,N,N,N,CP_Drtn,TT_Task,DT_FixedDrtn,TK_NotStart,HHI.1587,Weld Outer Vertical Seam/Install the Stairways support on Shell,,450,0,10,0,160,160,10,85.333334,0,85.333334,,,,2014-07-21 09:00,2014-07-22 13:00,,2014-05-20 07:00,2014-05-20 17:00,2014-05-20 07:00,2014-05-20 17:00,2014-05-20 07:00,2014-05-20 17:00,2014-07-21 09:00,2014-07-22 13:00,,PT_Normal,,,,,bot1ZqdJRo+rCqekBcSFLQ,2HUPhNZBpkG0qZLxbVb8tQ,,,N,0,0,,,2014-02-17 15:27,2014-03-01 17:09,admin,admin,
439,128082,6764,35334,6640,0,N,N,N,CP_Drtn,TT_Task,DT_FixedDrtn,TK_NotStart,HHI.1588,Backgouge & NDT Inside Vertical Seam,,450,0,10,0,80,80,10,33.066667,0,33.066667,,,,2014-07-22 13:00,2014-07-24 11:00,,2014-05-21 07:00,2014-05-21 17:00,2014-05-21 07:00,2014-05-21 17:00,2014-05-21 07:00,2014-05-21 17:00,2014-07-22 13:00,2014-07-24 11:00,,PT_Normal,,,,,ouzZq0NjQwCQl7V2Dd+fJA,MLt2TKWfR0W/lkjsM642Sg,,,N,0,0,,,2014-02-17 15:27,2014-03-01 17:09,admin,admin,
440,128083,6764,35334,6640,0,N,N,N,CP_Drtn,TT_Task,DT_FixedDrtn,TK_NotStart,HHI.1589,Weld Inside Vertical Seam,,450,0,10,0,202.666668,202.666668,10,85.333333,0,85.333333,,,,2014-07-24 11:00,2014-07-26 15:00,,2014-05-22 07:00,2014-05-22 17:00,2014-05-22 07:00,2014-05-22 17:00,2014-05-22 07:00,2014-05-22 17:00,2014-07-24 11:00,2014-07-26 15:00,,PT_Normal,,,,,KqVahidjRLKbMo7jUDjS+A,UjY8tqqcBU2ge0O0s6aVrw,,,N,0,0,,,2014-02-17 15:27,2014-03-01 17:09,admin,admin,
441,128084,6764,35334,6640,0,N,N,N,CP_Drtn,TT_Task,DT_FixedDrtn,TK_NotStart,HHI.1590,"Weld Outer Horizontal Seam between Shell Course # 3 & 4""""",,450,0,10,0,388.266664,388.266664,10,72.96,0,72.96,,,,2014-07-27 09:00,2014-07-30 11:00,,2014-05-24 07:00,2014-05-24 17:00,2014-05-24 07:00,2014-05-24 17:00,2014-05-24 07:00,2014-05-24 17:00,2014-07-27 09:00,2014-07-30 11:00,,PT_Normal,,,,,q1Wk6rgIQRm4U1Ir+DJqhw,GE0uWmr3sEWUKSMPOq/HYA,,,N,0,0,,,2014-02-17 15:27,2014-03-01 17:09,admin,admin,
442,128085,6764,35334,6640,0,N,N,N,CP_Drtn,TT_Task,DT_FixedDrtn,TK_NotStart,HHI.1591,"Backgouge & NDT Inside Horizontal Seam between Shell Course# 3 & 4""""",,450,0,10,0,101.333333,101.333333,10,33.066667,0,33.066667,,,,2014-07-30 11:00,2014-07-31 11:00,,2014-05-25 07:00,2014-05-25 17:00,2014-05-25 07:00,2014-05-25 17:00,2014-05-25 07:00,2014-05-25 17:00,2014-07-30 11:00,2014-07-31 11:00,,PT_Normal,,,,,gPlE79hnRiSyXnWZijtzXg,gbTaxz322U6+hB4xBXL1Yw,,,N,0,0,,,2014-02-17 15:27,2014-03-01 17:09,admin,admin,
443,128086,6764,35334,6640,0,N,N,N,CP_Drtn,TT_Task,DT_FixedDrtn,TK_NotStart,HHI.1592,"Weld Inner Horizontal Seam between Shell Course # 3 & 4""""",,450,0,10,0,388.266664,388.266664,10,72.96,0,72.96,,,,2014-07-31 11:00,2014-08-01 13:30,,2014-05-26 07:00,2014-05-26 17:00,2014-05-26 07:00,2014-05-26 17:00,2014-05-26 07:00,2014-05-26 17:00,2014-07-31 11:00,2014-08-01 13:30,,PT_Normal,,,,,76J1qONmRPCr262zPGyucA,rFeVSk2DE02pBDtWOixcRA,,,N,0,0,,,2014-02-17 15:27,2014-03-01 17:09,admin,admin,
444,128087,6764,35334,6640,0,N,N,N,CP_Drtn,TT_Task,DT_FixedDrtn,TK_NotStart,HHI.1594,"Quailty Check(Visual Inspection,PT,Air Leak Test for Shell Nozzle)",,450,0,70,0,34.222222,34.222222,70,33.066667,0,33.066667,,,,2014-07-19 11:00,2014-08-01 13:30,,2014-05-19 07:00,2014-05-26 17:00,2014-05-19 07:00,2014-05-26 17:00,2014-05-19 07:00,2014-05-26 17:00,2014-07-19 11:00,2014-08-01 13:30,,PT_Normal,,,,,JASLJNOWSLGLzwck7T36Tw,2j01wJTXhUC/6XPx0lG68A,,,N,0,0,,,2014-02-17 15:27,2014-03-01 17:09,admin,admin,
445,128088,6764,35334,6640,0,N,N,N,CP_Drtn,TT_Task,DT_FixedDrtn,TK_NotStart,HHI.1593,"Fit,Weld Nozzle on Shell",,450,0,10,0,0,0,10,0,0,0,,,,2014-07-31 11:00,2014-08-01 13:30,,2014-05-26 07:00,2014-05-26 17:00,2014-05-26 07:00,2014-05-26 17:00,2014-05-26 07:00,2014-05-26 17:00,2014-07-31 11:00,2014-08-01 13:30,,PT_Normal,,,,,QwccIJ7wRE6O9KVLDsSJsQ,,,,N,0,0,,,2014-02-17 15:27,2014-03-01 17:09,admin,admin,
446,128089,6764,35335,6640,0,N,N,N,CP_Drtn,TT_Task,DT_FixedDrtn,TK_NotStart,HHI.1599,Erect & Tack Shell Course # 4 & Install Stagging Brackets,,450,0,10,0,560,560,10,48,0,48,,,,2014-08-03 16:00,2014-08-04 16:00,,2014-05-29 07:00,2014-05-29 17:00,2014-05-29 07:00,2014-05-29 17:00,2014-05-29 07:00,2014-05-29 17:00,2014-08-03 16:00,2014-08-04 16:00,,PT_Normal,,,,,HrvPg1o+StyDosX8roxU0g,IG7Y3prRiUW94aX3DDYlmQ,,,N,0,0,,,2014-02-17 15:27,2014-03-01 17:09,admin,admin,
447,128090,6764,35335,6640,0,N,N,N,CP_Drtn,TT_Task,DT_FixedDrtn,TK_NotStart,HHI.1600,Weld Outer Vertical Seam/Install the Stairways support on Shell,,450,0,10,0,192.000001,192.000001,10,85.333334,0,85.333334,,,,2014-08-04 16:00,2014-08-05 16:00,,2014-05-31 07:00,2014-05-31 17:00,2014-05-31 07:00,2014-05-31 17:00,2014-05-31 07:00,2014-05-31 17:00,2014-08-04 16:00,2014-08-05 16:00,,PT_Normal,,,,,4wDJffj6RaCLfUAewSyI9w,twK7yaifCUOAebnS7QrdAg,,,N,0,0,,,2014-02-17 15:27,2014-03-01 17:09,admin,admin,
448,128091,6764,35335,6640,0,N,N,N,CP_Drtn,TT_Task,DT_FixedDrtn,TK_NotStart,HHI.1601,Backgouge & NDT Inside Vertical Seam,,450,0,10,0,101.333333,101.333333,10,33.066667,0,33.066667,,,,2014-08-05 16:00,2014-08-06 16:00,,2014-06-01 07:00,2014-06-01 17:00,2014-06-01 07:00,2014-06-01 17:00,2014-06-01 07:00,2014-06-01 17:00,2014-08-05 16:00,2014-08-06 16:00,,PT_Normal,,,,,hX8TKPJBRmCgJ+ABWqJIHQ,83pBpMu5mEK22c0+zuRg5A,,,N,0,0,,,2014-02-17 15:27,2014-03-01 17:09,admin,admin,
449,128092,6764,35335,6640,0,N,N,N,CP_Drtn,TT_Task,DT_FixedDrtn,TK_NotStart,HHI.1602,Weld Inside Vertical Seam,,450,0,10,0,202.666668,202.666668,10,85.333333,0,85.333333,,,,2014-08-06 16:00,2014-08-07 16:00,,2014-06-02 07:00,2014-06-02 17:00,2014-06-02 07:00,2014-06-02 17:00,2014-06-02 07:00,2014-06-02 17:00,2014-08-06 16:00,2014-08-07 16:00,,PT_Normal,,,,,7aieI1kmTNa/lqHWICZqTw,62kh+Bgm5ESg43Asc2nYWA,,,N,0,0,,,2014-02-17 15:27,2014-03-01 17:09,admin,admin,
450,128093,6764,35335,6640,0,N,N,N,CP_Drtn,TT_Task,DT_FixedDrtn,TK_NotStart,HHI.1603,"Weld Outer Horizontal Seam between Shell Course # 3 & 4""""",,450,0,10,0,405.333332,405.333332,10,128,0,128,,,,2014-08-07 16:00,2014-08-09 11:00,,2014-06-03 07:00,2014-06-03 17:00,2014-06-03 07:00,2014-06-03 17:00,2014-06-03 07:00,2014-06-03 17:00,2014-08-07 16:00,2014-08-09 11:00,,PT_Normal,,,,,gxQmjjwFRwCTxge6x35npA,N0JewsEndkCfRFtRRCt6sA,,,N,0,0,,,2014-02-17 15:27,2014-03-01 17:09,admin,admin,
451,128094,6764,35335,6640,0,N,N,N,CP_Drtn,TT_Task,DT_FixedDrtn,TK_NotStart,HHI.1604,"Backgouge & NDT Inside Horizontal Seam between Shell Course# 3 & 4""""",,450,0,10,0,94.222222,94.222222,10,33.066667,0,33.066667,,,,2014-08-09 11:00,2014-08-10 11:00,,2014-06-04 07:00,2014-06-04 17:00,2014-06-04 07:00,2014-06-04 17:00,2014-06-04 07:00,2014-06-04 17:00,2014-08-09 11:00,2014-08-10 11:00,,PT_Normal,,,,,VSWKiaiMRrWZmPy0QO43zQ,0XVe2w2zIUSm6q5Oq4tAwA,,,N,0,0,,,2014-02-17 15:27,2014-03-01 17:09,admin,admin,
452,128095,6764,35335,6640,0,N,N,N,CP_Drtn,TT_Task,DT_FixedDrtn,TK_NotStart,HHI.1605,"Weld Inner Horizontal Seam between Shell Course # 3 & 4""""",,450,0,10,0,405.333332,405.333332,10,128,0,128,,,,2014-08-10 11:00,2014-08-11 11:00,,2014-06-05 07:00,2014-06-05 17:00,2014-06-05 07:00,2014-06-05 17:00,2014-06-05 07:00,2014-06-05 17:00,2014-08-10 11:00,2014-08-11 11:00,,PT_Normal,,,,,t0GSZr6CTgGJI9vXxYDTkg,XeR5RMnt4kKNByzzbBAofA,,,N,0,0,,,2014-02-17 15:27,2014-03-01 17:09,admin,admin,
453,128096,6764,35335,6640,0,N,N,N,CP_Drtn,TT_Task,DT_FixedDrtn,TK_NotStart,HHI.1607,"Quailty Check(Visual Inspection,PT,Air Leak Test for Shell Nozzle)",,450,0,70,0,48.444444,48.444444,70,33.066667,0,33.066667,,,,2014-08-03 16:00,2014-08-11 11:00,,2014-05-29 07:00,2014-06-05 17:00,2014-05-29 07:00,2014-06-05 17:00,2014-05-29 07:00,2014-06-05 17:00,2014-08-03 16:00,2014-08-11 11:00,,PT_Normal,,,,,EIiDH0i/Qseuvevnw7azVg,bdkUj2TMnki2pgsUawtDtw,,,N,0,0,,,2014-02-17 15:27,2014-03-01 17:09,admin,admin,
454,128097,6764,35335,6640,0,N,N,N,CP_Drtn,TT_Task,DT_FixedDrtn,TK_NotStart,HHI.1606,"Fit,Weld Nozzle on Shell",,450,0,10,0,0,0,10,0,0,0,,,,2014-08-10 11:00,2014-08-11 11:00,,2014-06-05 07:00,2014-06-05 17:00,2014-06-05 07:00,2014-06-05 17:00,2014-06-05 07:00,2014-06-05 17:00,2014-08-10 11:00,2014-08-11 11:00,,PT_Normal,,,,,aF5si1IYQ7aMI0uJQEliyA,+J71crjBuEuAjRwNHXwkeA,,,N,0,0,,,2014-02-17 15:27,2014-03-01 17:09,admin,admin,
455,128098,6764,35336,6640,0,N,N,N,CP_Drtn,TT_Task,DT_FixedDrtn,TK_NotStart,HHI.1611,Perform RT for Tank#1 & #2,,450,0,10,0,0,0,10,0,0,0,,,,2014-08-14 11:00,2014-08-15 13:30,,2014-06-10 07:00,2014-06-10 17:00,2014-06-10 07:00,2014-06-10 17:00,2014-06-10 07:00,2014-06-10 17:00,2014-08-14 11:00,2014-08-15 13:30,,PT_Normal,,,,,mrKwCB4/TvCmbbatnHMXNw,cBwKtAx2Gkmkm3Q8Ukhy9A,,,N,0,0,,,2014-02-17 15:27,2014-03-01 17:09,admin,admin,
456,128099,6764,35337,6640,0,N,N,N,CP_Drtn,TT_Task,DT_FixedDrtn,TK_NotStart,HHI.1596,Erect & Tack Wind Girder,,450,0,10,0,276.888892,276.888892,10,11.377778,0,11.377778,,,,2014-08-01 13:30,2014-08-02 16:00,,2014-05-27 07:00,2014-05-27 17:00,2014-05-27 07:00,2014-05-27 17:00,2014-05-27 07:00,2014-05-27 17:00,2014-08-01 13:30,2014-08-02 16:00,,PT_Normal,,,,,vaACqJAsRaenpj7av8ndUA,z4VOO5JblE2DKRx7Y0A6wQ,,,N,0,0,,,2014-02-17 15:27,2014-03-01 17:09,admin,admin,
457,128100,6764,35337,6640,0,N,N,N,CP_Drtn,TT_Task,DT_FixedDrtn,TK_NotStart,HHI.1597,Weld Wind Girder,,450,0,20,0,608.000004,608.000004,20,85.333333,0,85.333333,,,,2014-08-02 16:00,2014-08-04 16:00,,2014-05-28 07:00,2014-05-29 17:00,2014-05-28 07:00,2014-05-29 17:00,2014-05-28 07:00,2014-05-29 17:00,2014-08-02 16:00,2014-08-04 16:00,,PT_Normal,,,,,V2oJfaFaRZmfZZafNQXaeg,j7sjrND8+kOLbNmf0mDA4Q,,,N,0,0,,,2014-02-17 15:27,2014-03-01 17:09,admin,admin,
458,128101,6764,35337,6640,0,N,N,N,CP_Drtn,TT_Task,DT_FixedDrtn,TK_NotStart,HHI.1598,Quailty Check(Visual Inspection & PT),,450,0,30,0,0,0,30,0,0,0,,,,2014-08-01 13:30,2014-08-04 16:00,,2014-05-27 07:00,2014-05-29 17:00,2014-05-27 07:00,2014-05-29 17:00,2014-05-27 07:00,2014-05-29 17:00,2014-08-01 13:30,2014-08-04 16:00,,PT_Normal,,,,,QnIQaIBMRJ2tFP1Rk9mQPA,PhEmXEUenk2y8ZZBsDP16Q,,,N,0,0,,,2014-02-17 15:27,2014-03-01 17:09,admin,admin,
459,128102,6764,35338,6640,0,N,N,N,CP_Drtn,TT_Task,DT_FixedDrtn,TK_NotStart,HHI.1608,Erect & Tack Wind Girder,,450,0,10,0,276.888892,276.888892,10,11.377778,0,11.377778,,,,2014-08-11 11:00,2014-08-12 11:00,,2014-06-07 07:00,2014-06-07 17:00,2014-06-07 07:00,2014-06-07 17:00,2014-06-07 07:00,2014-06-07 17:00,2014-08-11 11:00,2014-08-12 11:00,,PT_Normal,,,,,FRN+nmH4RouxLz0CGTTJag,XuyUIgqmHUuk00STyqEGGA,,,N,0,0,,,2014-02-17 15:27,2014-03-01 17:09,admin,admin,
460,128103,6764,35338,6640,0,N,N,N,CP_Drtn,TT_Task,DT_FixedDrtn,TK_NotStart,HHI.1609,Weld Wind Girder,,450,0,20,0,608.000004,608.000004,20,85.333333,0,85.333333,,,,2014-08-12 11:00,2014-08-14 11:00,,2014-06-08 07:00,2014-06-09 17:00,2014-06-08 07:00,2014-06-09 17:00,2014-06-08 07:00,2014-06-09 17:00,2014-08-12 11:00,2014-08-14 11:00,,PT_Normal,,,,,yuwh6zE8RDuojvoNo7LEVQ,1LZqRJ8/iUixaC28SM95gg,,,N,0,0,,,2014-02-17 15:27,2014-03-01 17:09,admin,admin,
461,128104,6764,35338,6640,0,N,N,N,CP_Drtn,TT_Task,DT_FixedDrtn,TK_NotStart,HHI.1610,Quailty Check(Visual Inspection & PT),,450,0,30,0,0,0,30,0,0,0,,,,2014-08-11 11:00,2014-08-14 11:00,,2014-06-07 07:00,2014-06-09 17:00,2014-06-07 07:00,2014-06-09 17:00,2014-06-07 07:00,2014-06-09 17:00,2014-08-11 11:00,2014-08-14 11:00,,PT_Normal,,,,,LdERN8SBSLef0sBK0741iw,D9bfFAE0I0e9+CmUPFyg3w,,,N,0,0,,,2014-02-17 15:27,2014-03-01 17:09,admin,admin,
462,128105,6764,35340,6640,0,N,N,N,CP_Drtn,TT_Task,DT_FixedDrtn,TK_NotStart,HHI.1702,"""""Fit & Tack 
Shell Course # 8 & Compression Ring",,450,0,20,0,255.999999,255.999999,20,8.533333,0,8.533333,,,,2014-10-23 16:00,2014-10-26 16:00,,2014-08-30 16:00,2014-09-01 16:00,2014-08-30 16:00,2014-09-01 16:00,2014-08-30 16:00,2014-09-01 16:00,2014-10-23 16:00,2014-10-26 16:00,,PT_Normal,,,,,RQ2YNlGRTmOGnqCDNdIK2Q,H2gngmQNBU+iDcaywCR70Q,,,N,0,0,,,2014-02-17 15:27,2014-03-01 17:09,admin,admin,
463,128106,6764,35340,6640,0,N,N,N,CP_Drtn,TT_Task,DT_FixedDrtn,TK_NotStart,HHI.1703,Weld Outer Horizontal Seam between Shell Course # 8 & Top Curb Angle,,460,0,10,0,128,128,10,33.066667,0,33.066667,,,,2014-10-27 16:00,2014-10-28 16:00,,2014-09-01 16:00,2014-09-02 16:00,2014-09-01 16:00,2014-09-02 16:00,2014-09-01 16:00,2014-09-02 16:00,2014-10-27 16:00,2014-10-28 16:00,,PT_Normal,,,,,mgdgNg85QtikKhND30PioA,+FJY9N2ikU+kT82xwA8row,,,N,0,0,,,2014-02-17 15:27,2014-03-01 17:09,admin,admin,
464,128107,6764,35340,6640,0,N,N,N,CP_Drtn,TT_Task,DT_FixedDrtn,TK_NotStart,HHI.1704,"""""Backgouge & NDT Inside Horizontal Seam between Shell Course# 8 & Top Curb Angle",,460,10,10,0,90,90,10,33.066667,0,33.066667,,,,2014-10-27 16:00,2014-10-28 16:00,,2014-09-01 16:00,2014-09-02 16:00,2014-09-01 16:00,2014-09-02 16:00,2014-09-01 16:00,2014-09-02 16:00,2014-10-27 16:00,2014-10-28 16:00,,PT_Normal,,,,,maFWgE7SRsaXuMKY9abOyw,zyqYVfQo/kuV9BC+v3OBrg,,,N,0,0,,,2014-02-17 15:27,2014-03-01 17:09,admin,admin,
465,128108,6764,35340,6640,0,N,N,N,CP_Drtn,TT_Task,DT_FixedDrtn,TK_NotStart,HHI.1706,Weld Inner Horizontal Seam between Shell Course #8 & Top Curb Angle,,450,0,10,0,191.333334,191.333334,10,33.066667,0,33.066667,,,,2014-10-28 16:00,2014-10-29 16:00,,2014-09-03 16:00,2014-09-04 16:00,2014-09-03 16:00,2014-09-04 16:00,2014-09-03 16:00,2014-09-04 16:00,2014-10-28 16:00,2014-10-29 16:00,,PT_Normal,,,,,NzDBfC3iTvGISwgLI/GhHQ,AWA8Ku2O20WDeDw1+dR2XA,,,N,0,0,,,2014-02-17 15:27,2014-03-01 17:09,admin,admin,
466,128109,6764,35340,6640,0,N,N,N,CP_Drtn,TT_Task,DT_FixedDrtn,TK_NotStart,HHI.1708,Quailty Check (Visual Inspection),,450,0,50,0,42.666664,42.666664,50,42.666667,0,42.666667,,,,2014-10-23 16:00,2014-10-29 16:00,,2014-08-30 16:00,2014-09-04 16:00,2014-08-30 16:00,2014-09-04 16:00,2014-08-30 16:00,2014-09-04 16:00,2014-10-23 16:00,2014-10-29 16:00,,PT_Normal,,,,,RBNWPjr7Tz2b5B1Rh7TPxA,MFfGwUAWiE6B31C5qir93A,,,N,0,0,,,2014-02-17 15:27,2014-03-01 17:09,admin,admin,
467,128110,6764,35340,6640,0,N,N,N,CP_Drtn,TT_Task,DT_FixedDrtn,TK_NotStart,HHI.1705,"Fit up,Tack of Gusset Plates to Shell",,450,0,20,0,341.333337,341.333337,20,17.066667,0,17.066667,,,,2014-10-26 16:00,2014-10-28 16:00,,2014-09-01 16:00,2014-09-03 16:00,2014-09-01 16:00,2014-09-03 16:00,2014-09-01 16:00,2014-09-03 16:00,2014-10-26 16:00,2014-10-28 16:00,,PT_Normal,,,,,KnRoE/r1Sf+sU44zsQSEWw,sEwCGvLXmkCia90qTBeyHA,,,N,0,0,,,2014-02-17 15:27,2014-03-01 17:09,admin,admin,
468,128111,6764,35340,6640,0,N,N,N,CP_Drtn,TT_Task,DT_FixedDrtn,TK_NotStart,HHI.1707,Welding of Gusset Plates,,450,0,10,0,202.666668,202.666668,10,85.333333,0,85.333333,,,,2014-10-28 16:00,2014-10-29 16:00,,2014-09-03 16:00,2014-09-04 16:00,2014-09-03 16:00,2014-09-04 16:00,2014-09-03 16:00,2014-09-04 16:00,2014-10-28 16:00,2014-10-29 16:00,,PT_Normal,,,,,EU4N8ESlT9CWVBztWqOotA,lND6a1AsqUKsWySfF3C9tg,,,N,0,0,,,2014-02-17 15:27,2014-03-01 17:09,admin,admin,
469,128112,6764,35341,6640,0,N,N,N,CP_Drtn,TT_Task,DT_FixedDrtn,TK_NotStart,HHI.1709,"Erect,Laydown & install Girders to Columns (1 Layers ,5 Girders)",,450,0,20,0,341.333331,341.333331,20,17.066666,0,17.066666,,,,2014-10-26 16:00,2014-10-28 16:00,,2014-09-01 16:00,2014-09-03 16:00,2014-09-01 16:00,2014-09-03 16:00,2014-09-01 16:00,2014-09-03 16:00,2014-10-26 16:00,2014-10-28 16:00,,PT_Normal,,,,,DTGmosheRwCBzh+LwHixQw,BENsB2dkjEKUUJ8n799kjw,,,N,0,0,,,2014-02-17 15:27,2014-03-01 17:09,admin,admin,
470,128113,6764,35342,6640,0,N,N,N,CP_Drtn,TT_Task,DT_FixedDrtn,TK_NotStart,HHI.1710,"Erect,Lay Down & Install the Rafters (75 Rafters)/ Install Internal Piping Brackets/Piping",,450,0,50,0,1343.999994,1343.999994,50,17.066666,0,17.066666,,,,2014-10-27 16:00,2014-11-02 16:00,,2014-09-02 16:00,2014-09-08 11:00,2014-09-02 16:00,2014-09-08 11:00,2014-09-02 16:00,2014-09-08 11:00,2014-10-27 16:00,2014-11-02 16:00,,PT_Normal,,,,,Ut3iUoaqTQmmVGOci0hIDQ,4fs8MXMkpEyKkF/EGhwx0A,,,N,0,0,,,2014-02-17 15:27,2014-03-01 17:09,admin,admin,
471,128114,6764,35343,6640,0,N,N,N,CP_Drtn,TT_Task,DT_FixedDrtn,TK_NotStart,HHI.1711,Prepare/Lay Down Roof Plates (27 Plates),,450,0,20,0,864.000004,864.000004,20,17.066667,0,17.066667,,,,2014-10-30 16:00,2014-11-02 16:00,,2014-09-06 11:00,2014-09-08 11:00,2014-09-06 11:00,2014-09-08 11:00,2014-09-06 11:00,2014-09-08 11:00,2014-10-30 16:00,2014-11-02 16:00,,PT_Normal,,,,,volCCh71TM2YgX1SZq6k/w,GHotb4VXN0eTkYwNbgzdNQ,,,N,0,0,,,2014-02-17 15:27,2014-03-01 17:09,admin,admin,
472,128115,6764,35343,6640,0,N,N,N,CP_Drtn,TT_Task,DT_FixedDrtn,TK_NotStart,HHI.1712,Tacking of Roof Plates,,450,0,20,0,968,968,20,0,0,0,,,,2014-10-30 16:00,2014-11-02 16:00,,2014-09-06 11:00,2014-09-08 11:00,2014-09-06 11:00,2014-09-08 11:00,2014-09-06 11:00,2014-09-08 11:00,2014-10-30 16:00,2014-11-02 16:00,,PT_Normal,,,,,tioDaFZVT8GE4HO5C8g78Q,kUn1E4ywPUq3w/UUNU1gow,,,N,0,0,,,2014-02-17 15:27,2014-03-01 17:09,admin,admin,
473,128116,6764,35343,6640,0,N,N,N,CP_Drtn,TT_Task,DT_FixedDrtn,TK_NotStart,HHI.1713,Welding of Roof Plates (Short Seams),,450,0,20,0,544,544,20,128,0,128,,,,2014-11-02 16:00,2014-11-04 16:00,,2014-09-08 11:00,2014-09-10 11:00,2014-09-08 11:00,2014-09-10 11:00,2014-09-08 11:00,2014-09-10 11:00,2014-11-02 16:00,2014-11-04 16:00,,PT_Normal,,,,,Od9TsiMuTreLrO+eLK3zDg,8SUbgBTd5UapL8vkTVnFgg,,,N,0,0,,,2014-02-17 15:27,2014-03-01 17:09,admin,admin,
474,128117,6764,35343,6640,0,N,N,N,CP_Drtn,TT_Task,DT_FixedDrtn,TK_NotStart,HHI.1715,Welding of Roof Plates (Long Seams),,450,0,30,0,1728.000001,1728.000001,30,249.6,0,249.6,,,,2014-11-04 16:00,2014-11-08 16:00,,2014-09-10 11:00,2014-09-13 16:00,2014-09-10 11:00,2014-09-13 16:00,2014-09-10 11:00,2014-09-13 16:00,2014-11-04 16:00,2014-11-08 16:00,,PT_Normal,,,,,V6Q18HaER2W8EoRWBPEBPA,RDdKSGFsF0OPxcuzZOBAbw,,,N,0,0,,,2014-02-17 15:27,2014-03-01 17:09,admin,admin,
475,128118,6764,35343,6640,0,N,N,N,CP_Drtn,TT_Task,DT_FixedDrtn,TK_NotStart,HHI.1714,Tack of Roof Plates to Curb Angle,,490,40,10,0,416,416,10,0,0,0,,,,2014-11-06 16:00,2014-11-08 16:00,,2014-09-08 11:00,2014-09-09 11:00,2014-09-08 11:00,2014-09-09 11:00,2014-09-08 11:00,2014-09-09 11:00,2014-11-06 16:00,2014-11-08 16:00,,PT_Normal,,,,,tsMqPoQ6QNeqneW7/s3ASg,ENRdC9ikakCvZRqwjO1b4w,,,N,0,0,,,2014-02-17 15:27,2014-03-01 17:09,admin,admin,
476,128119,6764,35343,6640,0,N,N,N,CP_Drtn,TT_Task,DT_FixedDrtn,TK_NotStart,HHI.1716,Welding of Roof Plates to Compression Ring,,450,0,20,0,608.000003,608.000003,20,85.333333,0,85.333333,,,,2014-11-08 16:00,2014-11-10 16:00,,2014-09-13 16:00,2014-09-15 16:00,2014-09-13 16:00,2014-09-15 16:00,2014-09-13 16:00,2014-09-15 16:00,2014-11-08 16:00,2014-11-10 16:00,,PT_Normal,,,,,GSFrvfNJRNuNrdHbQyGSLQ,LB5PfZbT20+bOiv1U/Dm7g,,,N,0,0,,,2014-02-17 15:27,2014-03-01 17:09,admin,admin,
477,128120,6764,35343,6640,0,N,N,N,CP_Drtn,TT_Task,DT_FixedDrtn,TK_NotStart,HHI.1719,"Quailty Check (Visual Inspection& Vaccum Box Test,PT,Air Leak Test for Roof Manholes& Nozzles))",,450,0,110,0,27.111111,27.111111,110,33.066667,0,33.066667,,,,2014-10-30 16:00,2014-11-12 16:00,,2014-09-06 11:00,2014-09-17 16:00,2014-09-06 11:00,2014-09-17 16:00,2014-09-06 11:00,2014-09-17 16:00,2014-10-30 16:00,2014-11-12 16:00,,PT_Normal,,,,,W9tGOfhHQiiOZER15boyFg,wudMLiS1JUSPYx38xDeDuQ,,,N,0,0,,,2014-02-17 15:27,2014-03-01 17:09,admin,admin,
478,128121,6764,35343,6640,0,N,N,N,CP_Drtn,TT_Task,DT_FixedDrtn,TK_NotStart,HHI.1717,"Fit,Weld Manholes ,Nozzles & install Top Platform Supports on Roof",,450,0,20,0,0,0,20,0,0,0,,,,2014-11-10 16:00,2014-11-12 16:00,,2014-09-15 16:00,2014-09-17 16:00,2014-09-15 16:00,2014-09-17 16:00,2014-09-15 16:00,2014-09-17 16:00,2014-11-10 16:00,2014-11-12 16:00,,PT_Normal,,,,,c9YGDiuqRQKWm6sfkVpzfw,zoyTLIgXu0WiQg0jn8hCqQ,,,N,0,0,,,2014-02-17 15:27,2014-03-01 17:09,admin,admin,
479,128122,6764,35343,6640,0,N,N,N,CP_Drtn,TT_Task,DT_FixedDrtn,TK_NotStart,HHI.1718,Weld Internal Piping to Nozzle N1,,450,0,10,0,0,0,10,0,0,0,,,,2014-11-11 16:00,2014-11-12 16:00,,2014-09-16 16:00,2014-09-17 16:00,2014-09-16 16:00,2014-09-17 16:00,2014-09-16 16:00,2014-09-17 16:00,2014-11-11 16:00,2014-11-12 16:00,,PT_Normal,,,,,WWDhipyPRQqEjgpNVNDjBg,yvjlfOjRo02o6sgd0tuNeQ,,,N,0,0,,,2014-02-17 15:27,2014-03-01 17:09,admin,admin,
480,128123,6764,35344,6640,0,N,N,N,CP_Drtn,TT_Task,DT_FixedDrtn,TK_NotStart,HHI.1720,Erect & Install Stairways & Platforms for Shell,,450,0,20,0,341.333337,341.333337,20,17.066667,0,17.066667,,,,2014-11-12 16:00,2014-11-15 16:00,,2014-09-17 16:00,2014-09-20 16:00,2014-09-17 16:00,2014-09-20 16:00,2014-09-17 16:00,2014-09-20 16:00,2014-11-12 16:00,2014-11-15 16:00,,PT_Normal,,,,,RK6t6jYKSgSmtn1hY1Rh5Q,7B5kXMK6Sk+AFji5H+7ykw,,,N,0,0,,,2014-02-17 15:27,2014-03-01 17:09,admin,admin,
481,128124,6764,35344,6640,0,N,N,N,CP_Drtn,TT_Task,DT_FixedDrtn,TK_NotStart,HHI.1721,Erect & Install Stairways & Platforms & Handrails for Roof,,450,0,20,0,341.333337,341.333337,20,17.066667,0,17.066667,,,,2014-11-15 16:00,2014-11-17 16:00,,2014-09-20 16:00,2014-09-22 16:00,2014-09-20 16:00,2014-09-22 16:00,2014-09-20 16:00,2014-09-22 16:00,2014-11-15 16:00,2014-11-17 16:00,,PT_Normal,,,,,krpH/cNnQRaYTLK2lNz+gQ,IVzL7jL4KU+0NX97SkKCxg,,,N,0,0,,,2014-02-17 15:27,2014-03-01 17:09,admin,admin,
482,128125,6764,35344,6640,0,N,N,N,CP_Drtn,TT_Task,DT_FixedDrtn,TK_NotStart,HHI.1722,Quality Check,,450,0,10,0,0,0,10,0,0,0,,,,2014-11-17 16:00,2014-11-18 16:00,,2014-09-22 16:00,2014-09-24 16:00,2014-09-22 16:00,2014-09-24 16:00,2014-09-22 16:00,2014-09-24 16:00,2014-11-17 16:00,2014-11-18 16:00,,PT_Normal,,,,,ISTRVvpJRL6DfnvOw6mtWQ,a8+DTHzlx0u6gT0aNmQa4w,,,N,0,0,,,2014-02-17 15:27,2014-03-01 17:09,admin,admin,
483,128126,6764,35347,6640,0,N,N,N,CP_Drtn,TT_Task,DT_FixedDrtn,TK_NotStart,HHI.1772,Perform Roof Surface Preparation & Painting,,140,0,20,0,288,288,20,96,0,96,,,,2015-01-14 16:00,2015-01-17 16:00,,2014-12-29 16:00,2014-12-31 16:00,2014-12-29 16:00,2014-12-31 16:00,2014-12-29 16:00,2014-12-31 16:00,2015-01-14 16:00,2015-01-17 16:00,,PT_Normal,,,,,N4xNjU2jRlqj6vSsvjbI4A,7oUn9Gz4ck+ucpU2FiGveQ,,,N,0,0,,,2014-02-17 15:27,2014-03-01 17:09,admin,admin,
484,128127,6764,35347,6640,0,N,N,N,CP_Drtn,TT_Task,DT_FixedDrtn,TK_NotStart,HHI.1771,Perform Shell Surface Preparation & Painting,,110,0,30,0,280,280,30,80,0,80,,,,2015-01-07 16:00,2015-01-11 16:00,,2014-12-25 16:00,2014-12-29 16:00,2014-12-25 16:00,2014-12-29 16:00,2014-12-25 16:00,2014-12-29 16:00,2015-01-07 16:00,2015-01-11 16:00,,PT_Normal,,,,,o/2BzAgmQGOyfwf8B9wONA,DdW5nvN0ske9bhoaYe6Hdw,,,N,0,0,,,2014-02-17 15:27,2014-03-01 17:09,admin,admin,
485,128128,6764,35347,6640,0,N,N,N,CP_Drtn,TT_Task,DT_FixedDrtn,TK_NotStart,HHI.1773,Quailty Check,,140,30,50,0,285.48,285.48,50,351.36,0,351.36,,,,2015-01-11 16:00,2015-01-17 16:00,,2014-12-25 16:00,2014-12-31 16:00,2014-12-25 16:00,2014-12-31 16:00,2014-12-25 16:00,2014-12-31 16:00,2015-01-11 16:00,2015-01-17 16:00,,PT_Normal,,,,,3TSuUK7JSuWkj3hc6dq4/w,df7pZEYSnkeNt1BoeLoF5A,,,N,0,0,,,2014-02-17 15:27,2014-03-01 17:09,admin,admin,
486,128129,6764,35348,6640,0,N,N,N,CP_Drtn,TT_Task,DT_FixedDrtn,TK_NotStart,HHI.1779,Quailty Check (including Holiday Test),,110,0,150,0,103.009524,103.009524,150,515.04762,0,515.04762,,,,2015-01-17 16:00,2015-02-03 16:00,,2015-01-04 16:00,2015-01-21 16:00,2015-01-04 16:00,2015-01-21 16:00,2015-01-04 16:00,2015-01-21 16:00,2015-01-17 16:00,2015-02-03 16:00,,PT_Normal,,,,,8h/kXpFHRva5xpOsbnLYwQ,T5sP4QgT4ki91WNEVRuUnA,,,N,0,0,,,2014-02-17 15:27,2014-03-01 17:09,admin,admin,
487,128130,6764,35348,6640,0,N,N,N,CP_Drtn,TT_Task,DT_FixedDrtn,TK_NotStart,HHI.1775,Perform Roof Underside Surface Preparation & Painting,,110,0,40,0,1133.104762,1133.104762,40,206.019048,0,206.019048,,,,2015-01-17 16:00,2015-01-21 16:00,,2015-01-04 16:00,2015-01-08 16:00,2015-01-04 16:00,2015-01-08 16:00,2015-01-04 16:00,2015-01-08 16:00,2015-01-17 16:00,2015-01-21 16:00,,PT_Normal,,,,,SSYIbvLzTaaBPIfHN8JkSA,6a97Riq980CYNFRtbdRhFA,,,N,0,0,,,2014-02-17 15:27,2014-03-01 17:09,admin,admin,
488,128131,6764,35348,6640,0,N,N,N,CP_Drtn,TT_Task,DT_FixedDrtn,TK_NotStart,HHI.1778,Perform Bottom Surface Preparation & Painting,,110,0,20,0,0,0,20,0,0,0,,,,2015-02-01 16:00,2015-02-03 16:00,,2015-01-19 16:00,2015-01-21 16:00,2015-01-19 16:00,2015-01-21 16:00,2015-01-19 16:00,2015-01-21 16:00,2015-02-01 16:00,2015-02-03 16:00,,PT_Normal,,,,,R3nhoEakT4GFnynyEOm/jg,cbJFeawP4Em29TMrCgYHDw,,,N,0,0,,,2014-02-17 15:27,2014-03-01 17:09,admin,admin,
489,128132,6764,35348,6640,0,N,N,N,CP_Drtn,TT_Task,DT_FixedDrtn,TK_NotStart,HHI.1776,Perform Shell course Surface Preparation & Painting,,110,0,50,0,0,0,50,0,0,0,,,,2015-01-21 16:00,2015-01-27 16:00,,2015-01-08 16:00,2015-01-14 16:00,2015-01-08 16:00,2015-01-14 16:00,2015-01-08 16:00,2015-01-14 16:00,2015-01-21 16:00,2015-01-27 16:00,,PT_Normal,,,,,0Ut2bADcSbKYhCnAXOTI5g,ZfPA8jkCNkeOFBDulhdY0A,,,N,0,0,,,2014-02-17 15:27,2014-03-01 17:09,admin,admin,
490,128133,6764,35348,6640,0,N,N,N,CP_Drtn,TT_Task,DT_FixedDrtn,TK_NotStart,HHI.1774,Install Scaffoldings,,110,0,80,0,0,0,80,0,0,0,,,,2015-01-07 16:00,2015-01-17 16:00,,2014-12-25 16:00,2015-01-04 16:00,2014-12-25 16:00,2015-01-04 16:00,2014-12-25 16:00,2015-01-04 16:00,2015-01-07 16:00,2015-01-17 16:00,,PT_Normal,,,,,q534umPCQQKwfOfmKsgtVQ,NDkfeEGnyU+/YjjsS7KL9w,,,N,0,0,,,2014-02-17 15:27,2014-03-01 17:09,admin,admin,
491,128134,6764,35348,6640,0,N,N,N,CP_Drtn,TT_Task,DT_FixedDrtn,TK_NotStart,HHI.1777,Dismantle Scaffoldings,,110,0,40,0,0,0,40,0,0,0,,,,2015-01-27 16:00,2015-02-01 16:00,,2015-01-14 16:00,2015-01-19 16:00,2015-01-14 16:00,2015-01-19 16:00,2015-01-14 16:00,2015-01-19 16:00,2015-01-27 16:00,2015-02-01 16:00,,PT_Normal,,,,,w7wc6OndT+WWewGOJ7CgfQ,RaYqZHweTECVEgIl44ESRw,,,N,0,0,,,2014-02-17 15:27,2014-03-01 17:09,admin,admin,
492,128135,6764,35350,6640,0,N,N,N,CP_Drtn,TT_Task,DT_FixedDrtn,TK_NotStart,HHI.1746,Remove Stagging Blanks/Brackets & Install Blind Flanges,,660,480,20,0,105.6,105.6,20,42.666666,0,42.666666,,,,2014-12-13 16:00,2014-12-15 16:00,,2014-09-24 16:00,2014-09-27 16:00,2014-09-24 16:00,2014-09-27 16:00,2014-09-24 16:00,2014-09-27 16:00,2014-12-13 16:00,2014-12-15 16:00,,PT_Normal,,,,,0qGwdGI0Qn2He70nR2xL4A,BYRJaxS6oU6cIGIMwZtRNg,,,N,0,0,,,2014-02-17 15:27,2014-03-01 17:09,admin,admin,
493,128136,6764,35350,6640,0,N,N,N,CP_Drtn,TT_Task,DT_FixedDrtn,TK_NotStart,HHI.1747,Tank Water Filling & Settlement from Desanilated Water Tank #2,,180,0,100,0,1407.999998,1407.999998,100,3002.666666,0,3002.666666,,,,2014-12-15 16:00,2014-12-27 16:00,,2014-11-24 16:00,2014-12-06 16:00,2014-11-24 16:00,2014-12-06 16:00,2014-11-24 16:00,2014-12-06 16:00,2014-12-15 16:00,2014-12-27 16:00,,PT_Normal,,,,,tk4eFR4AR/CKdFCrzWHiWg,Pgs3KN5mkkmN7OGUfaEF0Q,,,N,0,0,,,2014-02-17 15:27,2014-03-01 17:09,admin,admin,
494,128137,6764,35350,6640,0,N,N,N,CP_Drtn,TT_Task,DT_FixedDrtn,TK_NotStart,HHI.1748,Hold & Inspect Water for 24 Hours,,180,0,10,0,128.000001,128.000001,10,85.333333,0,85.333333,,,,2014-12-27 16:00,2014-12-28 16:00,,2014-12-06 16:00,2014-12-07 16:00,2014-12-06 16:00,2014-12-07 16:00,2014-12-06 16:00,2014-12-07 16:00,2014-12-27 16:00,2014-12-28 16:00,,PT_Normal,,,,,bEOYGTY9SBO0f/q2Vv1/Jg,abx6tcHvYkG4aRg4pttOFw,,,N,0,0,,,2014-02-17 15:27,2014-03-01 17:09,admin,admin,
495,128138,6764,35350,6640,0,N,N,N,CP_Drtn,TT_Task,DT_FixedDrtn,TK_NotStart,HHI.1750,"Build Mobile Scaffolding,Internal CLeaning&Dismantling",,180,0,30,0,73.200001,73.200001,30,85.333334,0,85.333334,,,,2015-01-03 16:00,2015-01-06 16:00,,2014-12-13 16:00,2014-12-16 16:00,2014-12-13 16:00,2014-12-16 16:00,2014-12-13 16:00,2014-12-16 16:00,2015-01-03 16:00,2015-01-06 16:00,,PT_Normal,,,,,hZ0e12tBRN+zLnHXvNxQAQ,ti7lo1reWkiK/HbLWJG2Pw,,,N,0,0,,,2014-02-17 15:27,2014-03-01 17:09,admin,admin,
496,128139,6764,35350,6640,0,N,N,N,CP_Drtn,TT_Task,DT_FixedDrtn,TK_NotStart,HHI.1751,Quailty Check,,180,0,10,0,50.666666,50.666666,10,42.666667,0,42.666667,,,,2015-01-06 16:00,2015-01-07 16:00,,2014-12-16 16:00,2014-12-17 16:00,2014-12-16 16:00,2014-12-17 16:00,2014-12-16 16:00,2014-12-17 16:00,2015-01-06 16:00,2015-01-07 16:00,,PT_Normal,,,,,tspGmQRGRbCCjQEsOPvDRg,HrokTdHDsUGq7bYemhPFrw,,,N,0,0,,,2014-02-17 15:27,2014-03-01 17:09,admin,admin,
497,128140,6764,35350,6640,0,N,N,N,CP_Drtn,TT_Task,DT_FixedDrtn,TK_NotStart,HHI.1749,Drain Water from Tank,,180,0,50,0,420.48,420.48,50,69.12,0,69.12,,,,2014-12-28 16:00,2015-01-03 16:00,,2014-12-07 16:00,2014-12-13 16:00,2014-12-07 16:00,2014-12-13 16:00,2014-12-07 16:00,2014-12-13 16:00,2014-12-28 16:00,2015-01-03 16:00,,PT_Normal,,,,,971nxLRFQoKw2HllLno8wg,2GGzOcttE0iFoXAWpiEeRg,,,N,0,0,,,2014-02-17 15:27,2014-03-01 17:09,admin,admin,
498,128141,6764,35351,6640,0,N,N,N,CP_Drtn,TT_Task,DT_FixedDrtn,TK_NotStart,HHI.1752,Remove Stagging Blanks/Brackets & Install Blind Flanges,,450,340,20,0,936,936,20,72,0,72,,,,2014-12-14 16:00,2014-12-16 16:00,,2014-10-22 16:00,2014-10-25 16:00,2014-10-22 16:00,2014-10-25 16:00,2014-10-22 16:00,2014-10-25 16:00,2014-12-14 16:00,2014-12-16 16:00,,PT_Normal,,,,,S5DK6EonR829J5SUDks+xQ,yljg/fUVtECjDFHsWcIuDw,,,N,0,0,,,2014-02-17 15:27,2014-03-01 17:09,admin,admin,
499,128142,6764,35351,6640,0,N,N,N,CP_Drtn,TT_Task,DT_FixedDrtn,TK_NotStart,HHI.1754,Hold & Inspect Water for 24 Hours/Drain Water,,110,0,50,0,34.133333,34.133333,50,85.333334,0,85.333334,,,,2014-12-28 16:00,2015-01-03 16:00,,2014-12-15 16:00,2014-12-21 16:00,2014-12-15 16:00,2014-12-21 16:00,2014-12-15 16:00,2014-12-21 16:00,2014-12-28 16:00,2015-01-03 16:00,,PT_Normal,,,,,atZKm/ISTUWiiOaZ6GR5ew,9eJibQABwEON6s+CSXwQPw,,,N,0,0,,,2014-02-17 15:27,2014-03-01 17:09,admin,admin,
500,128143,6764,35351,6640,0,N,N,N,CP_Drtn,TT_Task,DT_FixedDrtn,TK_NotStart,HHI.1755,"Build Mobile Scaffolding,Internal CLeaning&Dismantling",,110,0,30,0,80,80,30,85.333334,0,85.333334,,,,2015-01-03 16:00,2015-01-06 16:00,,2014-12-21 16:00,2014-12-24 16:00,2014-12-21 16:00,2014-12-24 16:00,2014-12-21 16:00,2014-12-24 16:00,2015-01-03 16:00,2015-01-06 16:00,,PT_Normal,,,,,iEoq1oVYTh+bMCqqdJSwhQ,5kt7yiwKtUefVhb8/bKezA,,,N,0,0,,,2014-02-17 15:27,2014-03-01 17:09,admin,admin,
501,128144,6764,35351,6640,0,N,N,N,CP_Drtn,TT_Task,DT_FixedDrtn,TK_NotStart,HHI.1756,Quailty Check,,110,0,10,0,25.6,25.6,10,42.666666,0,42.666666,,,,2015-01-06 16:00,2015-01-07 16:00,,2014-12-24 16:00,2014-12-25 16:00,2014-12-24 16:00,2014-12-25 16:00,2014-12-24 16:00,2014-12-25 16:00,2015-01-06 16:00,2015-01-07 16:00,,PT_Normal,,,,,OAVEiiCsQeCYecE6CGhm2Q,zjIXJvcRukK1C7yn/ehVSQ,,,N,0,0,,,2014-02-17 15:27,2014-03-01 17:09,admin,admin,
502,128145,6764,35351,6640,0,N,N,N,CP_Drtn,TT_Task,DT_FixedDrtn,TK_NotStart,HHI.1753,Tank Water Filling/Settlement from Desanilated Water Tank #2,,110,0,100,0,0,0,100,0,0,0,,,,2014-12-16 16:00,2014-12-28 16:00,,2014-12-03 16:00,2014-12-15 16:00,2014-12-03 16:00,2014-12-15 16:00,2014-12-03 16:00,2014-12-15 16:00,2014-12-16 16:00,2014-12-28 16:00,,PT_Normal,,,,,40GjeQQaQIGE2+pn5kWayw,cmVL0Hc3eUusKVb8KL1GUg,,,N,0,0,,,2014-02-17 15:27,2014-03-01 17:09,admin,admin,
503,128146,6764,35353,6640,0,N,N,N,CP_Drtn,TT_Task,DT_FixedDrtn,TK_NotStart,HHI.1757,Weld & Align Roof Columns,,180,0,20,0,0,0,20,0,0,0,,,,2015-01-06 16:00,2015-01-08 16:00,,2014-12-16 16:00,2014-12-18 16:00,2014-12-16 16:00,2014-12-18 16:00,2014-12-16 16:00,2014-12-18 16:00,2015-01-06 16:00,2015-01-08 16:00,,PT_Normal,,,,,WUOkXbzITPWj9bbcZ1FgMA,lykAxzrdRkWkvGlsSmlrsg,,,N,0,0,,,2014-02-17 15:27,2014-03-01 17:09,admin,admin,
504,128147,6764,35354,6640,0,N,N,N,CP_Drtn,TT_Task,DT_FixedDrtn,TK_NotStart,HHI.1758,Weld & Align Roof Columns,,110,0,20,0,0,0,20,0,0,0,,,,2015-01-06 16:00,2015-01-08 16:00,,2014-12-24 16:00,2014-12-27 16:00,2014-12-24 16:00,2014-12-27 16:00,2014-12-24 16:00,2014-12-27 16:00,2015-01-06 16:00,2015-01-08 16:00,,PT_Normal,,,,,qNo9uel/RA29W8pRM0RClA,QfyPi8OSBkOm8MsMpC2ucQ,,,N,0,0,,,2014-02-17 15:27,2014-03-01 17:09,admin,admin,
505,128148,6764,35356,6640,0,N,N,N,CP_Drtn,TT_Task,DT_FixedDrtn,TK_NotStart,HHI.1763,Perform Roof Surface Preparation & Painting,,210,0,20,0,288,288,20,96,0,96,,,,2015-01-14 16:00,2015-01-17 16:00,,2014-12-21 16:00,2014-12-23 16:00,2014-12-21 16:00,2014-12-23 16:00,2014-12-21 16:00,2014-12-23 16:00,2015-01-14 16:00,2015-01-17 16:00,,PT_Normal,,,,,bU9t4TzpTJyfG95kyR0OxA,RjuqV+TgiUu5ghNCH/H/Hg,,,N,0,0,,,2014-02-17 15:27,2014-03-01 17:09,admin,admin,
506,128149,6764,35356,6640,0,N,N,N,CP_Drtn,TT_Task,DT_FixedDrtn,TK_NotStart,HHI.1762,Perform Shell Surface Preparation & Painting,,180,0,30,0,280,280,30,80,0,80,,,,2015-01-07 16:00,2015-01-11 16:00,,2014-12-17 16:00,2014-12-21 16:00,2014-12-17 16:00,2014-12-21 16:00,2014-12-17 16:00,2014-12-21 16:00,2015-01-07 16:00,2015-01-11 16:00,,PT_Normal,,,,,GMlYZMwGT8uAtuTb/qnCdw,cDIG/Z5JnUWfMyPzJ9tQ2g,,,N,0,0,,,2014-02-17 15:27,2014-03-01 17:09,admin,admin,
507,128150,6764,35356,6640,0,N,N,N,CP_Drtn,TT_Task,DT_FixedDrtn,TK_NotStart,HHI.1764,Quailty Check,,210,30,50,0,285.48,285.48,50,351.36,0,351.36,,,,2015-01-11 16:00,2015-01-17 16:00,,2014-12-17 16:00,2014-12-23 16:00,2014-12-17 16:00,2014-12-23 16:00,2014-12-17 16:00,2014-12-23 16:00,2015-01-11 16:00,2015-01-17 16:00,,PT_Normal,,,,,oppIC/4/TW2142GTiFhyUA,CGRXMiWnSUqpJsWw7X9Y0Q,,,N,0,0,,,2014-02-17 15:27,2014-03-01 17:09,admin,admin,
508,128151,6764,35357,6640,0,N,N,N,CP_Drtn,TT_Task,DT_FixedDrtn,TK_NotStart,HHI.1770,Quailty Check (including Holiday Test),,180,0,150,0,103.009524,103.009524,150,515.04762,0,515.04762,,,,2015-01-17 16:00,2015-02-03 16:00,,2014-12-27 16:00,2015-01-13 16:00,2014-12-27 16:00,2015-01-13 16:00,2014-12-27 16:00,2015-01-13 16:00,2015-01-17 16:00,2015-02-03 16:00,,PT_Normal,,,,,CX8iZlKoSYS/gjaRnmTs0w,38cxw3SOb0iFp8OpO99ldw,,,N,0,0,,,2014-02-17 15:27,2014-03-01 17:09,admin,admin,
509,128152,6764,35357,6640,0,N,N,N,CP_Drtn,TT_Task,DT_FixedDrtn,TK_NotStart,HHI.1766,Perform Roof Underside Surface Preparation & Painting,,180,0,40,0,1133.104762,1133.104762,40,206.019048,0,206.019048,,,,2015-01-17 16:00,2015-01-21 16:00,,2014-12-27 16:00,2014-12-31 16:00,2014-12-27 16:00,2014-12-31 16:00,2014-12-27 16:00,2014-12-31 16:00,2015-01-17 16:00,2015-01-21 16:00,,PT_Normal,,,,,k3p7GrmCT8e67i97ptB1NA,qLVUi4fVkEuFof5MbyDorg,,,N,0,0,,,2014-02-17 15:27,2014-03-01 17:09,admin,admin,
510,128153,6764,35357,6640,0,N,N,N,CP_Drtn,TT_Task,DT_FixedDrtn,TK_NotStart,HHI.1769,Perform Bottom Surface Preparation & Painting,,180,0,20,0,0,0,20,0,0,0,,,,2015-02-01 16:00,2015-02-03 16:00,,2015-01-11 16:00,2015-01-13 16:00,2015-01-11 16:00,2015-01-13 16:00,2015-01-11 16:00,2015-01-13 16:00,2015-02-01 16:00,2015-02-03 16:00,,PT_Normal,,,,,l4Yw9bh3TUKGY49oYTC7hg,EaLRddfzJ02ZFyoxdLzDWw,,,N,0,0,,,2014-02-17 15:27,2014-03-01 17:09,admin,admin,
511,128154,6764,35357,6640,0,N,N,N,CP_Drtn,TT_Task,DT_FixedDrtn,TK_NotStart,HHI.1767,Perform Shell course Surface Preparation & Painting,,180,0,50,0,0,0,50,0,0,0,,,,2015-01-21 16:00,2015-01-27 16:00,,2014-12-31 16:00,2015-01-06 16:00,2014-12-31 16:00,2015-01-06 16:00,2014-12-31 16:00,2015-01-06 16:00,2015-01-21 16:00,2015-01-27 16:00,,PT_Normal,,,,,SmPLb/6BSQ+vWu11GOjVrw,B/Y+KQu+gEGlAY3SGyA9TA,,,N,0,0,,,2014-02-17 15:27,2014-03-01 17:09,admin,admin,
512,128155,6764,35357,6640,0,N,N,N,CP_Drtn,TT_Task,DT_FixedDrtn,TK_NotStart,HHI.1765,Install Scaffoldings,,180,0,80,0,0,0,80,0,0,0,,,,2015-01-07 16:00,2015-01-17 16:00,,2014-12-17 16:00,2014-12-27 16:00,2014-12-17 16:00,2014-12-27 16:00,2014-12-17 16:00,2014-12-27 16:00,2015-01-07 16:00,2015-01-17 16:00,,PT_Normal,,,,,ZDvRXh66S9yhUs1mYcgI8w,E0i7QLo4WEy2HR1lE+3B/g,,,N,0,0,,,2014-02-17 15:27,2014-03-01 17:09,admin,admin,
513,128156,6764,35357,6640,0,N,N,N,CP_Drtn,TT_Task,DT_FixedDrtn,TK_NotStart,HHI.1768,Dismantle Scaffoldings,,180,0,40,0,0,0,40,0,0,0,,,,2015-01-27 16:00,2015-02-01 16:00,,2015-01-06 16:00,2015-01-11 16:00,2015-01-06 16:00,2015-01-11 16:00,2015-01-06 16:00,2015-01-11 16:00,2015-01-27 16:00,2015-02-01 16:00,,PT_Normal,,,,,OrMvz/uoQ6+CMJWlscYi8w,R5/V18GIR0mEH+HfC39pqw,,,N,0,0,,,2014-02-17 15:27,2014-03-01 17:09,admin,admin,
514,128157,6764,35359,6640,0,N,N,N,CP_Drtn,TT_Task,DT_FixedDrtn,TK_NotStart,HHI.1780,"Install Valves,instruments (Supplied by client)",,180,0,10,0,0,0,10,0,0,0,,,,2015-02-03 16:00,2015-02-04 16:00,,2015-01-13 16:00,2015-01-14 16:00,2015-01-13 16:00,2015-01-14 16:00,2015-01-13 16:00,2015-01-14 16:00,2015-02-03 16:00,2015-02-04 16:00,,PT_Normal,,,,,az3J6JukQ+uvVgLGDIrcmg,olpW7cQMuEuSI7nfJnv66A,,,N,0,0,,,2014-02-17 15:27,2014-03-01 17:09,admin,admin,
515,128158,6764,35360,6640,0,N,N,N,CP_Drtn,TT_Task,DT_FixedDrtn,TK_NotStart,HHI.1782,"Install Valves,instruments (Supplied by client)",,110,0,10,0,0,0,10,0,0,0,,,,2015-02-03 16:00,2015-02-04 16:00,,2015-01-21 16:00,2015-01-22 16:00,2015-01-21 16:00,2015-01-22 16:00,2015-01-21 16:00,2015-01-22 16:00,2015-02-03 16:00,2015-02-04 16:00,,PT_Normal,,,,,UsseTXbYRd6wI1cX5Pt74w,bTD7eL6rlky0ZUHPC1rYjg,,,N,0,0,,,2014-02-17 15:27,2014-03-01 17:09,admin,admin,
516,128159,6764,35362,6640,0,N,N,N,CP_Drtn,TT_Task,DT_FixedDrtn,TK_NotStart,HHI.1759,"Fit,Weld Name Plate brackets/Attachments on shell Course #1",,180,0,10,0,17.066666,17.066666,10,42.666666,0,42.666666,,,,2015-01-06 16:00,2015-01-07 16:00,,2014-12-16 16:00,2014-12-17 16:00,2014-12-16 16:00,2014-12-17 16:00,2014-12-16 16:00,2014-12-17 16:00,2015-01-06 16:00,2015-01-07 16:00,,PT_Normal,,,,,PBgwQIuWSzC23a4JBWubTQ,KFtQkFRRIES57DRDXvf9GA,,,N,0,0,,,2014-02-17 15:27,2014-03-01 17:09,admin,admin,
517,128160,6764,35363,6640,0,N,N,N,CP_Drtn,TT_Task,DT_FixedDrtn,TK_NotStart,HHI.1760,"Fit,Weld Name Plate brackets/Attachments on shell Course #1",,110,0,10,0,51.199998,51.199998,10,42.666667,0,42.666667,,,,2015-01-06 16:00,2015-01-07 16:00,,2014-12-24 16:00,2014-12-25 16:00,2014-12-24 16:00,2014-12-25 16:00,2014-12-24 16:00,2014-12-25 16:00,2015-01-06 16:00,2015-01-07 16:00,,PT_Normal,,,,,0CFY/1/tTtmY2eNfActPGw,UYcRpN/ZjU+g0b7y+Qb8Og,,,N,0,0,,,2014-02-17 15:27,2014-03-01 17:09,admin,admin,
518,128161,6764,35365,6640,0,N,N,N,CP_Drtn,TT_Task,DT_FixedDrtn,TK_NotStart,HHI.1781,Perform Final Inspection & Handover to CLient,,180,180,10,0,0,0,10,0,0,0,,,,2015-02-04 16:00,2015-02-05 16:00,,2015-01-14 16:00,2015-01-15 16:00,2015-01-14 16:00,2015-01-15 16:00,2015-01-14 16:00,2015-01-15 16:00,2015-02-04 16:00,2015-02-05 16:00,,PT_Normal,,,,,lK/pkeEhSNqGMha+D7O2Yg,7fywY1krIUWbQ46fJVpvsQ,,,N,0,0,,,2014-02-17 15:27,2014-03-01 17:09,admin,admin,
519,128162,6764,35366,6640,0,N,N,N,CP_Drtn,TT_Task,DT_FixedDrtn,TK_NotStart,HHI.1783,Perform Final Inspection & Handover to CLient,,110,110,10,0,0,0,10,0,0,0,,,,2015-02-04 16:00,2015-02-05 16:00,,2015-01-22 16:00,2015-01-24 16:00,2015-01-22 16:00,2015-01-24 16:00,2015-01-22 16:00,2015-01-24 16:00,2015-02-04 16:00,2015-02-05 16:00,,PT_Normal,,,,,29ggB//WS2WLlOfrUBD39g,3bUHtGbkDka0WY3sxSzJqA,,,N,0,0,,,2014-02-17 15:27,2014-03-01 17:09,admin,admin,
520,128163,6764,35370,6640,0,N,N,N,CP_Drtn,TT_Task,DT_FixedDrtn,TK_NotStart,HHI.1212,Prepare/Lay Down Roof Plates (38 Plates),,0,0,20,0,864.000004,864.000004,20,17.066667,0,17.066667,,,,2014-08-10 11:00,2014-08-12 11:00,,2014-08-10 11:00,2014-08-12 11:00,2014-08-10 11:00,2014-08-12 11:00,2014-08-10 11:00,2014-08-12 11:00,2014-08-10 11:00,2014-08-12 11:00,,PT_Normal,,,,,PHAAadncSMSIPEgHhKF6cA,M+LWXTH44ku1W68wnrFfow,,,Y,0,0,,,2014-02-17 15:27,2014-03-01 17:03,admin,admin,
521,128164,6764,35370,6640,0,N,N,N,CP_Drtn,TT_Task,DT_FixedDrtn,TK_NotStart,HHI.1213,Tacking of Roof Plates,,0,0,20,0,968,968,20,0,0,0,,,,2014-08-10 11:00,2014-08-12 11:00,,2014-08-10 11:00,2014-08-12 11:00,2014-08-10 11:00,2014-08-12 11:00,2014-08-10 11:00,2014-08-12 11:00,2014-08-10 11:00,2014-08-12 11:00,,PT_Normal,,,,,2FDFuMabQRehlg2qPu9+vg,Lfs23UoPaUakhzW0njsHQA,,,Y,0,0,,,2014-02-17 15:27,2014-03-01 17:03,admin,admin,
522,128165,6764,35370,6640,0,N,N,N,CP_Drtn,TT_Task,DT_FixedDrtn,TK_NotStart,HHI.1215,Welding of Roof Plates (Short Seams),,0,0,20,0,544,544,20,128,0,128,,,,2014-08-12 11:00,2014-08-14 11:00,,2014-08-12 11:00,2014-08-14 11:00,2014-08-12 11:00,2014-08-14 11:00,2014-08-12 11:00,2014-08-14 11:00,2014-08-12 11:00,2014-08-14 11:00,,PT_Normal,,,,,Aqk0UKqmTq6JR7ia3Q4ucQ,/izagY3GWk2jgrjRxHZObQ,,,Y,0,0,,,2014-02-17 15:27,2014-03-01 17:03,admin,admin,
523,128166,6764,35370,6640,0,N,N,N,CP_Drtn,TT_Task,DT_FixedDrtn,TK_NotStart,HHI.1216,Welding of Roof Plates (Long Seams),,0,0,30,0,1728.000001,1728.000001,30,249.6,0,249.6,,,,2014-08-14 11:00,2014-08-17 16:00,,2014-08-14 11:00,2014-08-17 16:00,2014-08-14 11:00,2014-08-17 16:00,2014-08-14 11:00,2014-08-17 16:00,2014-08-14 11:00,2014-08-17 16:00,,PT_Normal,,,,,xMfNmgY0RKOXovb+0szp8Q,leo6+u5GqEO35Sx5TfHNvg,,,Y,0,0,,,2014-02-17 15:27,2014-03-01 17:03,admin,admin,
524,128167,6764,35370,6640,0,N,N,N,CP_Drtn,TT_Task,DT_FixedDrtn,TK_NotStart,HHI.1214,Tack of Roof Plates to Curb Angle,,40,40,10,0,416,416,10,0,0,0,,,,2014-08-16 16:00,2014-08-17 16:00,,2014-08-12 11:00,2014-08-13 11:00,2014-08-12 11:00,2014-08-13 11:00,2014-08-12 11:00,2014-08-13 11:00,2014-08-16 16:00,2014-08-17 16:00,,PT_Normal,,,,,6D2u2HkQQh+ghXNqx/4fqQ,h+c/tJ5lzEW/57AwmfP1CQ,,,N,0,0,,,2014-02-17 15:27,2014-03-01 17:03,admin,admin,
525,128168,6764,35370,6640,0,N,N,N,CP_Drtn,TT_Task,DT_FixedDrtn,TK_NotStart,HHI.1217,Welding of Roof Plates to Curb Angle,,0,0,10,0,608.000003,608.000003,10,85.333333,0,85.333333,,,,2014-08-17 16:00,2014-08-18 16:00,,2014-08-17 16:00,2014-08-18 16:00,2014-08-17 16:00,2014-08-18 16:00,2014-08-17 16:00,2014-08-18 16:00,2014-08-17 16:00,2014-08-18 16:00,,PT_Normal,,,,,08cs+MzMQGCeEuZH9tlVzQ,iBiMErvxCEO8vpbHn3TsFg,,,Y,0,0,,,2014-02-17 15:27,2014-03-01 17:03,admin,admin,
526,128169,6764,35370,6640,0,N,N,N,CP_Drtn,TT_Task,DT_FixedDrtn,TK_NotStart,HHI.1220,"Quailty Check (Visual Inspection& Vaccum Box Test,PT,Air Leak Test for Roof Manholes& Nozzles))",,0,0,110,0,27.111111,27.111111,110,33.066667,0,33.066667,,,,2014-08-10 11:00,2014-08-21 16:00,,2014-08-10 11:00,2014-08-21 16:00,2014-08-10 11:00,2014-08-21 16:00,2014-08-10 11:00,2014-08-21 16:00,2014-08-10 11:00,2014-08-21 16:00,,PT_Normal,,,,,C/7w0qEuShetg2Y+qgVSsg,3lqhUUyIjk27T+/KpFJ6fw,,,Y,0,0,,,2014-02-17 15:27,2014-03-01 17:03,admin,admin,
527,128170,6764,35370,6640,0,N,N,N,CP_Drtn,TT_Task,DT_FixedDrtn,TK_NotStart,HHI.1218,"Fit,Weld Manholes ,Nozzles on Roof & install Top Platform Supports on Roof",,0,0,20,0,0,0,20,0,0,0,,,,2014-08-19 16:00,2014-08-21 16:00,,2014-08-19 16:00,2014-08-21 16:00,2014-08-19 16:00,2014-08-21 16:00,2014-08-19 16:00,2014-08-21 16:00,2014-08-19 16:00,2014-08-21 16:00,,PT_Normal,,,,,sEhUT+ZsRVWWQraXk4xtZQ,6oIcDkRTBkKLoAndg7Xsfw,,,Y,0,0,,,2014-02-17 15:27,2014-03-01 17:03,admin,admin,
528,128171,6764,35370,6640,0,N,N,N,CP_Drtn,TT_Task,DT_FixedDrtn,TK_NotStart,HHI.1219,Weld Internal Piping to Nozzle N1,,0,0,10,0,0,0,10,0,0,0,,,,2014-08-20 16:00,2014-08-21 16:00,,2014-08-20 16:00,2014-08-21 16:00,2014-08-20 16:00,2014-08-21 16:00,2014-08-20 16:00,2014-08-21 16:00,2014-08-20 16:00,2014-08-21 16:00,,PT_Normal,,,,,M7WkZQE4RZ+LfQqyoM2kBA,spLUNMl3VEOrgCCeSSjLzQ,,,Y,0,0,,,2014-02-17 15:27,2014-03-01 17:03,admin,admin,
529,128172,6764,35371,6640,0,N,N,N,CP_Drtn,TT_Task,DT_FixedDrtn,TK_NotStart,HHI.1209,"Erect,& Install the Rafters (85 Rafters) /Install Internal Piping Brackets/Piping",,0,0,50,0,1343.999994,1343.999994,50,17.066666,0,17.066666,,,,2014-08-06 16:00,2014-08-12 11:00,,2014-08-06 16:00,2014-08-12 11:00,2014-08-06 16:00,2014-08-12 11:00,2014-08-06 16:00,2014-08-12 11:00,2014-08-06 16:00,2014-08-12 11:00,,PT_Normal,,,,,ed4J84wJRISSh9fQbQufxg,ZACZuNVs0UG3XycvNSHj3A,,,Y,0,0,,,2014-02-17 15:27,2014-03-01 17:03,admin,admin,
530,128173,6764,35372,6640,0,N,N,N,CP_Drtn,TT_Task,DT_FixedDrtn,TK_NotStart,HHI.1208,"Erect,& install Girders to Columns (1 Layer ,5 Girders)",,0,0,20,0,341.333331,341.333331,20,17.066666,0,17.066666,,,,2014-08-05 16:00,2014-08-07 16:00,,2014-08-05 16:00,2014-08-07 16:00,2014-08-05 16:00,2014-08-07 16:00,2014-08-05 16:00,2014-08-07 16:00,2014-08-05 16:00,2014-08-07 16:00,,PT_Normal,,,,,WoygJxxlSvOkKqALEASznA,L/pZz9N7rEmYsPmCRoxJjg,,,Y,0,0,,,2014-02-17 15:27,2014-03-01 17:03,admin,admin,
531,128174,6764,35373,6640,0,N,N,N,CP_Drtn,TT_Task,DT_FixedDrtn,TK_NotStart,HHI.1201,"""""Fit & Tack 
Shell Course # 8 & Top Curb Angle",,0,0,20,0,255.999999,255.999999,20,8.533333,0,8.533333,,,,2014-08-03 16:00,2014-08-05 16:00,,2014-08-03 16:00,2014-08-05 16:00,2014-08-03 16:00,2014-08-05 16:00,2014-08-03 16:00,2014-08-05 16:00,2014-08-03 16:00,2014-08-05 16:00,,PT_Normal,,,,,jurkRNaTSMOrcsO+AgSN7A,rCYGquYG7UScaUkP04QJ/w,,,Y,0,0,,,2014-02-17 15:27,2014-03-01 17:03,admin,admin,
532,128175,6764,35373,6640,0,N,N,N,CP_Drtn,TT_Task,DT_FixedDrtn,TK_NotStart,HHI.1202,Weld Outer Horizontal Seam between Shell Course # 7 & Top Curb Angle,,10,0,10,0,128,128,10,33.066667,0,33.066667,,,,2014-08-06 16:00,2014-08-07 16:00,,2014-08-05 16:00,2014-08-06 16:00,2014-08-05 16:00,2014-08-06 16:00,2014-08-05 16:00,2014-08-06 16:00,2014-08-06 16:00,2014-08-07 16:00,,PT_Normal,,,,,WxF5L013RIGatZ2vUiaBiQ,y2/MkgwEMUC/4kVHNv4XYg,,,N,0,0,,,2014-02-17 15:27,2014-03-01 17:03,admin,admin,
533,128176,6764,35373,6640,0,N,N,N,CP_Drtn,TT_Task,DT_FixedDrtn,TK_NotStart,HHI.1203,"""""Backgouge & NDT Inside Horizontal Seam between Shell Course# 7 & Top Curb Angle",,10,10,10,0,90,90,10,33.066667,0,33.066667,,,,2014-08-06 16:00,2014-08-07 16:00,,2014-08-05 16:00,2014-08-06 16:00,2014-08-05 16:00,2014-08-06 16:00,2014-08-05 16:00,2014-08-06 16:00,2014-08-06 16:00,2014-08-07 16:00,,PT_Normal,,,,,Xs2mrq75Q0qyfdDGJVH4Hg,SeyXt42NTESt0L8I23aSvQ,,,N,0,0,,,2014-02-17 15:27,2014-03-01 17:03,admin,admin,
534,128177,6764,35373,6640,0,N,N,N,CP_Drtn,TT_Task,DT_FixedDrtn,TK_NotStart,HHI.1205,Weld Inner Horizontal Seam between Shell Course # 7 & Top Curb Angle,,0,0,10,0,191.333334,191.333334,10,33.066667,0,33.066667,,,,2014-08-07 16:00,2014-08-09 11:00,,2014-08-07 16:00,2014-08-09 11:00,2014-08-07 16:00,2014-08-09 11:00,2014-08-07 16:00,2014-08-09 11:00,2014-08-07 16:00,2014-08-09 11:00,,PT_Normal,,,,,Uf0NWXxmRAO4vjuY8odxgA,2Zm45dwrGEi92T8a/Xkihw,,,Y,0,0,,,2014-02-17 15:27,2014-03-01 17:03,admin,admin,
535,128178,6764,35373,6640,0,N,N,N,CP_Drtn,TT_Task,DT_FixedDrtn,TK_NotStart,HHI.1207,Quailty Check (Visual Inspection),,0,0,50,0,42.666664,42.666664,50,42.666667,0,42.666667,,,,2014-08-03 16:00,2014-08-09 11:00,,2014-08-03 16:00,2014-08-09 11:00,2014-08-03 16:00,2014-08-09 11:00,2014-08-03 16:00,2014-08-09 11:00,2014-08-03 16:00,2014-08-09 11:00,,PT_Normal,,,,,kmNPSUqSTFG2eh6XWIDSXQ,CULjMXbMLE6nXfPGYHTSSA,,,Y,0,0,,,2014-02-17 15:27,2014-03-01 17:03,admin,admin,
536,128179,6764,35373,6640,0,N,N,N,CP_Drtn,TT_Task,DT_FixedDrtn,TK_NotStart,HHI.1204,"Fit up,Tack of Gusset Plates to Shell",,0,0,20,0,341.333337,341.333337,20,17.066667,0,17.066667,,,,2014-08-05 16:00,2014-08-07 16:00,,2014-08-05 16:00,2014-08-07 16:00,2014-08-05 16:00,2014-08-07 16:00,2014-08-05 16:00,2014-08-07 16:00,2014-08-05 16:00,2014-08-07 16:00,,PT_Normal,,,,,8/lKiGM4QviIkCWMDP1fZQ,qFqzBHSkvEOWcGdyifxxWw,,,Y,0,0,,,2014-02-17 15:27,2014-03-01 17:03,admin,admin,
537,128180,6764,35373,6640,0,N,N,N,CP_Drtn,TT_Task,DT_FixedDrtn,TK_NotStart,HHI.1206,Welding of Gusset Plates,,0,0,10,0,202.666668,202.666668,10,85.333333,0,85.333333,,,,2014-08-07 16:00,2014-08-09 11:00,,2014-08-07 16:00,2014-08-09 11:00,2014-08-07 16:00,2014-08-09 11:00,2014-08-07 16:00,2014-08-09 11:00,2014-08-07 16:00,2014-08-09 11:00,,PT_Normal,,,,,Ymzb8MltTq2O0yKO95A3LA,/uB0CaTIc0W6nZG0jagalg,,,Y,0,0,,,2014-02-17 15:27,2014-03-01 17:03,admin,admin,
538,128181,6764,35374,6640,0,N,N,N,CP_Drtn,TT_Task,DT_FixedDrtn,TK_NotStart,HHI.1221,Erect & Install Stairways & Platforms for Shell,,0,0,20,0,341.333337,341.333337,20,17.066667,0,17.066667,,,,2014-08-23 11:00,2014-08-25 11:00,,2014-08-23 11:00,2014-08-25 11:00,2014-08-23 11:00,2014-08-25 11:00,2014-08-23 11:00,2014-08-25 11:00,2014-08-23 11:00,2014-08-25 11:00,,PT_Normal,,,,,dy8+fT/xSCaQAqUi5KMGlg,P5Dsds3VbUmQibzwPe3UOA,,,Y,0,0,,,2014-02-17 15:27,2014-03-01 17:03,admin,admin,
539,128182,6764,35374,6640,0,N,N,N,CP_Drtn,TT_Task,DT_FixedDrtn,TK_NotStart,HHI.1222,Erect & Install Stairways & Platforms & Handrails for Roof,,0,0,20,0,341.333337,341.333337,20,17.066667,0,17.066667,,,,2014-08-25 11:00,2014-08-27 11:00,,2014-08-25 11:00,2014-08-27 11:00,2014-08-25 11:00,2014-08-27 11:00,2014-08-25 11:00,2014-08-27 11:00,2014-08-25 11:00,2014-08-27 11:00,,PT_Normal,,,,,1Ec5uSPJQyqpxPHEHxCzig,3UVcuisrKUWSEpA6IokrnA,,,Y,0,0,,,2014-02-17 15:27,2014-03-01 17:03,admin,admin,
540,128183,6764,35374,6640,0,N,N,N,CP_Drtn,TT_Task,DT_FixedDrtn,TK_NotStart,HHI.1223,Quality Check,,0,0,10,0,0,0,10,0,0,0,,,,2014-08-27 11:00,2014-08-28 11:00,,2014-08-27 11:00,2014-08-28 11:00,2014-08-27 11:00,2014-08-28 11:00,2014-08-27 11:00,2014-08-28 11:00,2014-08-27 11:00,2014-08-28 11:00,,PT_Normal,,,,,qYA4yhb+Qb+7umkHfnYeIQ,DK8tyciL7UeedncZlzgGNw,,,Y,0,0,,,2014-02-17 15:27,2014-03-01 17:03,admin,admin,
541,128184,6764,35376,6640,0,N,N,N,CP_Drtn,TT_Task,DT_FixedDrtn,TK_NotStart,HHI.1224,Mechanical Completion (MCC) & Final Isnpection Before Hydrotesting,,0,0,10,0,16,16,10,40,0,40,,,,2014-08-03 16:00,2014-08-04 16:00,,2014-08-03 16:00,2014-08-04 16:00,2014-08-03 16:00,2014-08-04 16:00,2014-08-03 16:00,2014-08-04 16:00,2014-08-03 16:00,2014-08-04 16:00,,PT_Normal,,,,,sjPDjlxITE2KeFxb4V+YOg,xONAK+hKSFm7ujAE4ajU/g,,,Y,0,0,,,2014-02-17 15:27,2014-03-01 17:06,admin,admin,
542,128185,6764,35377,6640,0,N,N,N,CP_Drtn,TT_Task,DT_FixedDrtn,TK_NotStart,HHI.1225,Mechanical Completion (MCC) & Final Inspection Before Hydrotesting,,0,0,10,0,24,24,10,40,0,40,,,,2014-08-28 11:00,2014-08-29 13:30,,2014-08-28 11:00,2014-08-29 13:30,2014-08-28 11:00,2014-08-29 13:30,2014-08-28 11:00,2014-08-29 13:30,2014-08-28 11:00,2014-08-29 13:30,,PT_Normal,,,,,26/ZOgk+ST6+tVwNNXoprA,gJMJdJtoSgitX+Fp18j6fw,,,Y,0,0,,,2014-02-17 15:27,2014-03-01 17:03,admin,admin,
543,128186,6764,35379,6640,0,N,N,N,CP_Drtn,TT_Task,DT_FixedDrtn,TK_NotStart,HHI.1185,"Erect, install Girders to Columns (1 Layers ,5 Girders)",,0,0,20,0,341.333331,341.333331,20,17.066666,0,17.066666,,,,2014-06-28 09:00,2014-07-01 11:00,,2014-06-28 09:00,2014-07-01 11:00,2014-06-28 09:00,2014-07-01 11:00,2014-06-28 09:00,2014-07-01 11:00,2014-06-28 09:00,2014-07-01 11:00,,PT_Normal,,,,,hfGX8etHT0+E+bdlEmwy3g,VvaMiLZ3RAec+fg22SUkUA,,,Y,0,0,,,2014-02-17 15:27,2014-03-01 14:49,admin,admin,
544,128187,6764,35380,6640,0,N,N,N,CP_Drtn,TT_Task,DT_FixedDrtn,TK_NotStart,HHI.1186,"Erect,& Install the Rafters (85 Rafters)/ Install Internal Piping Brackets/Piping",,0,0,50,0,1343.999994,1343.999994,50,17.066666,0,17.066666,,,,2014-06-29 13:00,2014-07-08 15:00,,2014-06-29 13:00,2014-07-08 15:00,2014-06-29 13:00,2014-07-08 15:00,2014-06-29 13:00,2014-07-08 15:00,2014-06-29 13:00,2014-07-08 15:00,,PT_Normal,,,,,V6Ambwb1Q8KQ6HsHoANRnw,kWd0PmqKTkONau9xeEp5/Q,,,Y,0,0,,,2014-02-17 15:27,2014-03-01 14:49,admin,admin,
545,128188,6764,35381,6640,0,N,N,N,CP_Drtn,TT_Task,DT_FixedDrtn,TK_NotStart,HHI.1189,Prepare/Lay Down Roof Plates (38 Plates),,0,0,20,0,864.000004,864.000004,20,17.066667,0,17.066667,,,,2014-07-05 13:00,2014-07-08 15:00,,2014-07-05 13:00,2014-07-08 15:00,2014-07-05 13:00,2014-07-08 15:00,2014-07-05 13:00,2014-07-08 15:00,2014-07-05 13:00,2014-07-08 15:00,,PT_Normal,,,,,ZrQaNw0iQAqV+WJZueCEWw,yaug2E1oTX++PxDKXpPz/g,,,Y,0,0,,,2014-02-17 15:27,2014-03-01 14:49,admin,admin,
546,128189,6764,35381,6640,0,N,N,N,CP_Drtn,TT_Task,DT_FixedDrtn,TK_NotStart,HHI.1190,Tacking of Roof Plates,,0,0,20,0,968,968,20,0,0,0,,,,2014-07-05 13:00,2014-07-08 15:00,,2014-07-05 13:00,2014-07-08 15:00,2014-07-05 13:00,2014-07-08 15:00,2014-07-05 13:00,2014-07-08 15:00,2014-07-05 13:00,2014-07-08 15:00,,PT_Normal,,,,,Y6tEJTvYRBKTkLvJzgAxIw,nU6ntAuDTyGQEMg77FJ+wA,,,Y,0,0,,,2014-02-17 15:27,2014-03-01 14:49,admin,admin,
547,128190,6764,35381,6640,0,N,N,N,CP_Drtn,TT_Task,DT_FixedDrtn,TK_NotStart,HHI.1192,Welding of Roof Plates (Short Seams),,0,0,20,0,544,544,20,128,0,128,,,,2014-07-09 09:00,2014-07-13 11:00,,2014-07-09 09:00,2014-07-13 11:00,2014-07-09 09:00,2014-07-13 11:00,2014-07-09 09:00,2014-07-13 11:00,2014-07-09 09:00,2014-07-13 11:00,,PT_Normal,,,,,C7RL4hu3TJGrS1+Ug3aC0Q,lOaPZbaGRNm99bKlOQtD1w,,,Y,0,0,,,2014-02-17 15:27,2014-03-01 14:49,admin,admin,
548,128191,6764,35381,6640,0,N,N,N,CP_Drtn,TT_Task,DT_FixedDrtn,TK_NotStart,HHI.1193,Welding of Roof Plates (Long Seams),,0,0,30,0,1728.000001,1728.000001,30,249.6,0,249.6,,,,2014-07-13 11:00,2014-07-19 11:00,,2014-07-13 11:00,2014-07-19 11:00,2014-07-13 11:00,2014-07-19 11:00,2014-07-13 11:00,2014-07-19 11:00,2014-07-13 11:00,2014-07-19 11:00,,PT_Normal,,,,,mlX1Af3VSGCTuRmbD6rRPQ,cwQbwNuoTLeV1nYINHd/XQ,,,Y,0,0,,,2014-02-17 15:27,2014-03-01 14:49,admin,admin,
549,128192,6764,35381,6640,0,N,N,N,CP_Drtn,TT_Task,DT_FixedDrtn,TK_NotStart,HHI.1191,Tack of Roof Plates to Curb Angle,,40,40,10,0,416,416,10,0,0,0,,,,2014-07-16 13:00,2014-07-19 11:00,,2014-07-09 09:00,2014-07-10 13:00,2014-07-09 09:00,2014-07-10 13:00,2014-07-09 09:00,2014-07-10 13:00,2014-07-16 13:00,2014-07-19 11:00,,PT_Normal,,,,,HVdcYXj8S8iudj67Nvxsqw,Vz+NMYIsQ8OC+OuHlrH5Qg,,,N,0,0,,,2014-02-17 15:27,2014-03-01 14:49,admin,admin,
550,128193,6764,35381,6640,0,N,N,N,CP_Drtn,TT_Task,DT_FixedDrtn,TK_NotStart,HHI.1194,Welding of Roof Plates to Curb Angle,,0,0,10,0,608.000003,608.000003,10,85.333333,0,85.333333,,,,2014-07-19 11:00,2014-07-20 15:00,,2014-07-19 11:00,2014-07-20 15:00,2014-07-19 11:00,2014-07-20 15:00,2014-07-19 11:00,2014-07-20 15:00,2014-07-19 11:00,2014-07-20 15:00,,PT_Normal,,,,,Avb3OeM0QLGv/mnPc+m/uQ,Tiub6DMKT7qcCORrGs6Naw,,,Y,0,0,,,2014-02-17 15:27,2014-03-01 14:49,admin,admin,
551,128194,6764,35381,6640,0,N,N,N,CP_Drtn,TT_Task,DT_FixedDrtn,TK_NotStart,HHI.1197,"Quailty Check (Visual Inspection& Vaccum Box Test,PT,Air Leak Test for Roof Manholes& Nozzles))",,0,0,110,0,27.111111,27.111111,110,33.066667,0,33.066667,,,,2014-07-05 13:00,2014-07-26 15:00,,2014-07-05 13:00,2014-07-26 15:00,2014-07-05 13:00,2014-07-26 15:00,2014-07-05 13:00,2014-07-26 15:00,2014-07-05 13:00,2014-07-26 15:00,,PT_Normal,,,,,QY7Cy/ctSpqmLZO12N5Obg,UKV7MRaKQD+PPWimBFGXsQ,,,Y,0,0,,,2014-02-17 15:27,2014-03-01 14:49,admin,admin,
552,128195,6764,35381,6640,0,N,N,N,CP_Drtn,TT_Task,DT_FixedDrtn,TK_NotStart,HHI.1195,"Fit,Weld Manholes ,Nozzles & install Top Platform Supports on Roof",,0,0,20,0,0,0,20,0,0,0,,,,2014-07-22 13:00,2014-07-26 15:00,,2014-07-22 13:00,2014-07-26 15:00,2014-07-22 13:00,2014-07-26 15:00,2014-07-22 13:00,2014-07-26 15:00,2014-07-22 13:00,2014-07-26 15:00,,PT_Normal,,,,,NHoMr6ksQbWxBV+YQ5QMbQ,kwVagvVoZ0mZIAWkn3VOig,,,Y,0,0,,,2014-02-17 15:27,2014-03-01 14:49,admin,admin,
553,128196,6764,35381,6640,0,N,N,N,CP_Drtn,TT_Task,DT_FixedDrtn,TK_NotStart,HHI.1196,Weld Internal Piping to Nozzle N1,,0,0,10,0,0,0,10,0,0,0,,,,2014-07-24 11:00,2014-07-26 15:00,,2014-07-24 11:00,2014-07-26 15:00,2014-07-24 11:00,2014-07-26 15:00,2014-07-24 11:00,2014-07-26 15:00,2014-07-24 11:00,2014-07-26 15:00,,PT_Normal,,,,,LYnrnd8rQtSZXmR21ijxjg,PF9Bglt11Eu6z+CjIhFQ9w,,,Y,0,0,,,2014-02-17 15:27,2014-03-01 14:49,admin,admin,
554,128197,6764,35382,6640,0,N,N,N,CP_Drtn,TT_Task,DT_FixedDrtn,TK_NotStart,HHI.1178,"""""Fit & Tack 
Shell Course # 8 & Top Curb Angle",,0,0,20,0,255.999999,255.999999,20,8.533333,0,8.533333,,,,2014-06-25 07:00,2014-06-26 17:00,,2014-06-25 07:00,2014-06-26 17:00,2014-06-25 07:00,2014-06-26 17:00,2014-06-25 07:00,2014-06-26 17:00,2014-06-25 07:00,2014-06-26 17:00,,PT_Normal,,,,,lQUFZNblScqmhfFaBi/mtw,4fRUXfheRh2bqNGfeOIUtA,,,Y,0,0,,,2014-02-17 15:27,2014-03-01 14:49,admin,admin,
555,128198,6764,35382,6640,0,N,N,N,CP_Drtn,TT_Task,DT_FixedDrtn,TK_NotStart,HHI.1179,Weld Outer Horizontal Seam between Shell Course # 8 & Top Curb Angle,,10,0,10,0,128,128,10,33.066667,0,33.066667,,,,2014-06-29 13:00,2014-07-01 11:00,,2014-06-28 09:00,2014-06-29 13:00,2014-06-28 09:00,2014-06-29 13:00,2014-06-28 09:00,2014-06-29 13:00,2014-06-29 13:00,2014-07-01 11:00,,PT_Normal,,,,,kDHPwBgsR1aXa/8nh0M66w,JvvGVt45RRCRe/PZV/zULQ,,,N,0,0,,,2014-02-17 15:27,2014-03-01 14:49,admin,admin,
556,128199,6764,35382,6640,0,N,N,N,CP_Drtn,TT_Task,DT_FixedDrtn,TK_NotStart,HHI.1180,"""""Backgouge & NDT Inside Horizontal Seam between Shell Course# 8 & Top Curb Angle",,10,10,10,0,90,90,10,33.066667,0,33.066667,,,,2014-06-29 13:00,2014-07-01 11:00,,2014-06-28 09:00,2014-06-29 13:00,2014-06-28 09:00,2014-06-29 13:00,2014-06-28 09:00,2014-06-29 13:00,2014-06-29 13:00,2014-07-01 11:00,,PT_Normal,,,,,9McWxmiQQ7+rLFc+iX60HQ,1JBzkU6KTAGLZW/N67m4PQ,,,N,0,0,,,2014-02-17 15:27,2014-03-01 14:49,admin,admin,
557,128200,6764,35382,6640,0,N,N,N,CP_Drtn,TT_Task,DT_FixedDrtn,TK_NotStart,HHI.1182,Weld Inner Horizontal Seam between Shell Course #8 & Top Curb Angle,,0,0,10,0,191.333334,191.333334,10,33.066667,0,33.066667,,,,2014-07-01 11:00,2014-07-02 15:00,,2014-07-01 11:00,2014-07-02 15:00,2014-07-01 11:00,2014-07-02 15:00,2014-07-01 11:00,2014-07-02 15:00,2014-07-01 11:00,2014-07-02 15:00,,PT_Normal,,,,,L/h6VcG0Q8KAXIscslo4sQ,xkyR5i0PQ/mxms0CJVabfg,,,Y,0,0,,,2014-02-17 15:27,2014-03-01 14:49,admin,admin,
558,128201,6764,35382,6640,0,N,N,N,CP_Drtn,TT_Task,DT_FixedDrtn,TK_NotStart,HHI.1184,Quailty Check (Visual Inspection),,0,0,50,0,42.666664,42.666664,50,42.666667,0,42.666667,,,,2014-06-25 07:00,2014-07-02 15:00,,2014-06-25 07:00,2014-07-02 15:00,2014-06-25 07:00,2014-07-02 15:00,2014-06-25 07:00,2014-07-02 15:00,2014-06-25 07:00,2014-07-02 15:00,,PT_Normal,,,,,yxTlKrxwTumcDTugvc5l+A,puuHkI7GSieHTAHzZ+Lr6Q,,,Y,0,0,,,2014-02-17 15:27,2014-03-01 14:49,admin,admin,
559,128202,6764,35382,6640,0,N,N,N,CP_Drtn,TT_Task,DT_FixedDrtn,TK_NotStart,HHI.1181,"Fit up,Tack of Gusset Plates to Shell",,0,0,20,0,341.333337,341.333337,20,17.066667,0,17.066667,,,,2014-06-28 09:00,2014-07-01 11:00,,2014-06-28 09:00,2014-07-01 11:00,2014-06-28 09:00,2014-07-01 11:00,2014-06-28 09:00,2014-07-01 11:00,2014-06-28 09:00,2014-07-01 11:00,,PT_Normal,,,,,BMUx1wabRWOlW96t7m07kQ,WRu6BV2mTceP+d9OQ5RfBA,,,Y,0,0,,,2014-02-17 15:27,2014-03-01 14:49,admin,admin,
560,128203,6764,35382,6640,0,N,N,N,CP_Drtn,TT_Task,DT_FixedDrtn,TK_NotStart,HHI.1183,Welding of Gusset Plates,,0,0,10,0,202.666668,202.666668,10,85.333333,0,85.333333,,,,2014-07-01 11:00,2014-07-02 15:00,,2014-07-01 11:00,2014-07-02 15:00,2014-07-01 11:00,2014-07-02 15:00,2014-07-01 11:00,2014-07-02 15:00,2014-07-01 11:00,2014-07-02 15:00,,PT_Normal,,,,,AKm7vUlqRx6EpKn3PCAygQ,Lx6/tZJQQuqoYcNDllu+pg,,,Y,0,0,,,2014-02-17 15:27,2014-03-01 14:49,admin,admin,
561,128204,6764,35383,6640,0,N,N,N,CP_Drtn,TT_Task,DT_FixedDrtn,TK_NotStart,HHI.1198,Erect & Install Stairways & Platforms for Shell,,0,0,20,0,341.333337,341.333337,20,17.066667,0,17.066667,,,,2014-07-27 09:00,2014-07-31 11:00,,2014-07-27 09:00,2014-07-31 11:00,2014-07-27 09:00,2014-07-31 11:00,2014-07-27 09:00,2014-07-31 11:00,2014-07-27 09:00,2014-07-31 11:00,,PT_Normal,,,,,50Gssip/T3OIJzdftMzdfg,8luPrszbRvCO9llbnOtarw,,,Y,0,0,,,2014-02-17 15:27,2014-03-01 14:49,admin,admin,
562,128205,6764,35383,6640,0,N,N,N,CP_Drtn,TT_Task,DT_FixedDrtn,TK_NotStart,HHI.1199,Erect & Install Stairways & Platforms & Handrails for Roof,,0,0,20,0,341.333337,341.333337,20,17.066667,0,17.066667,,,,2014-07-31 11:00,2014-08-02 16:00,,2014-07-31 11:00,2014-08-02 16:00,2014-07-31 11:00,2014-08-02 16:00,2014-07-31 11:00,2014-08-02 16:00,2014-07-31 11:00,2014-08-02 16:00,,PT_Normal,,,,,R6Lx6FJTTICnLE8m9w87Cg,JC++5UrkQX+zfYQ2erpMKw,,,Y,0,0,,,2014-02-17 15:27,2014-03-01 14:49,admin,admin,
563,128206,6764,35383,6640,0,N,N,N,CP_Drtn,TT_Task,DT_FixedDrtn,TK_NotStart,HHI.1200,Quality Check,,0,0,10,0,0,0,10,0,0,0,,,,2014-08-02 16:00,2014-08-03 16:00,,2014-08-02 16:00,2014-08-03 16:00,2014-08-02 16:00,2014-08-03 16:00,2014-08-02 16:00,2014-08-03 16:00,2014-08-02 16:00,2014-08-03 16:00,,PT_Normal,,,,,CaPP/mmoSP2MHM/Q2/vGoQ,PP9WkB+s00WruaxVYjqKcA,,,Y,0,0,,,2014-02-17 15:27,2014-03-01 14:49,admin,admin,
564,128207,6764,35385,6640,0,N,N,N,CP_Drtn,TT_Task,DT_FixedDrtn,TK_NotStart,HHI.1041,Perform RT for Tank#1 & #2,,0,0,10,0,0,0,10,0,0,0,,,,2014-03-22 07:00,2014-03-22 17:00,,2014-03-22 07:00,2014-03-22 17:00,2014-03-22 07:00,2014-03-22 17:00,2014-03-22 07:00,2014-03-22 17:00,2014-03-22 07:00,2014-03-22 17:00,,PT_Normal,,,,,fZihiCIGSiaHP31ouSwUvw,fblkQIEz9UaACAlKeVUFvg,,,Y,0,0,,,2014-02-17 15:27,2014-03-01 14:49,admin,admin,
565,128208,6764,35386,6640,0,N,N,N,CP_Drtn,TT_Task,DT_FixedDrtn,TK_NotStart,HHI.1034,Erect & Tack Shell Course # 1 &Install Stagging Brackets,,0,0,20,0,420,420,20,48,0,48,,,,2014-03-16 07:00,2014-03-17 17:00,,2014-03-16 07:00,2014-03-17 17:00,2014-03-16 07:00,2014-03-17 17:00,2014-03-16 07:00,2014-03-17 17:00,2014-03-16 07:00,2014-03-17 17:00,,PT_Normal,,,,,4TiTi/7pRGaQl4bFd+RMPQ,k57uS/yKQtOz525kIFvO8w,,,Y,0,0,,,2014-02-17 15:27,2014-03-01 14:49,admin,admin,
566,128209,6764,35386,6640,0,N,N,N,CP_Drtn,TT_Task,DT_FixedDrtn,TK_NotStart,HHI.1037,Weld Outer Vertical Seam/Install the Stairways support on Shell,,0,0,10,0,290.133334,290.133334,10,85.333334,0,85.333334,,,,2014-03-17 07:00,2014-03-17 17:00,,2014-03-17 07:00,2014-03-17 17:00,2014-03-17 07:00,2014-03-17 17:00,2014-03-17 07:00,2014-03-17 17:00,2014-03-17 07:00,2014-03-17 17:00,,PT_Normal,,,,,R+DcJ7PJQ+yqeKcRmnT5fA,AbHns7/8SnmlpdNlV/XoVA,,,Y,0,0,,,2014-02-17 15:27,2014-03-01 14:49,admin,admin,
567,128210,6764,35386,6640,0,N,N,N,CP_Drtn,TT_Task,DT_FixedDrtn,TK_NotStart,HHI.1038,"Backgouge,Grinding & NDT Inside Vertical Seam",,0,0,10,0,87.111111,87.111111,10,33.066667,0,33.066667,,,,2014-03-18 07:00,2014-03-18 17:00,,2014-03-18 07:00,2014-03-18 17:00,2014-03-18 07:00,2014-03-18 17:00,2014-03-18 07:00,2014-03-18 17:00,2014-03-18 07:00,2014-03-18 17:00,,PT_Normal,,,,,tXkdfTClT62a1See9B4CYg,wXNoTIqHRB+Q7YGirtRAlw,,,Y,0,0,,,2014-02-17 15:27,2014-03-01 14:49,admin,admin,
568,128211,6764,35386,6640,0,N,N,N,CP_Drtn,TT_Task,DT_FixedDrtn,TK_NotStart,HHI.1039,Weld Inside Vertical Seam,,0,0,10,0,192.000001,192.000001,10,85.333334,0,85.333334,,,,2014-03-19 07:00,2014-03-19 17:00,,2014-03-19 07:00,2014-03-19 17:00,2014-03-19 07:00,2014-03-19 17:00,2014-03-19 07:00,2014-03-19 17:00,2014-03-19 07:00,2014-03-19 17:00,,PT_Normal,,,,,EUH9q7u1TGeMHBcqfSYrEg,9QrVb91mQcS2oag/EzUbEw,,,Y,0,0,,,2014-02-17 15:27,2014-03-01 14:49,admin,admin,
569,128212,6764,35386,6640,0,N,N,N,CP_Drtn,TT_Task,DT_FixedDrtn,TK_NotStart,HHI.1035,"Quailty Check(Visual Inspection  PT,Air Leak Test for Shell Manholes& Nozzles)",,0,0,50,0,21.333333,21.333333,50,33.066667,0,33.066667,,,,2014-03-16 07:00,2014-03-20 17:00,,2014-03-16 07:00,2014-03-20 17:00,2014-03-16 07:00,2014-03-20 17:00,2014-03-16 07:00,2014-03-20 17:00,2014-03-16 07:00,2014-03-20 17:00,,PT_Normal,,,,,bxOOnUmkQZSc/EPrqwQSwA,VZBdykufRgq+asB9VQCV7A,,,Y,0,0,,,2014-02-17 15:27,2014-03-01 14:49,admin,admin,
570,128213,6764,35386,6640,0,N,N,N,CP_Drtn,TT_Task,DT_FixedDrtn,TK_NotStart,HHI.1036,Fit up/Tack Shell #1 to Annular Plate,,0,0,10,0,0,0,10,0,0,0,,,,2014-03-17 07:00,2014-03-17 17:00,,2014-03-17 07:00,2014-03-17 17:00,2014-03-17 07:00,2014-03-17 17:00,2014-03-17 07:00,2014-03-17 17:00,2014-03-17 07:00,2014-03-17 17:00,,PT_Normal,,,,,K86u2ftRQy2Itv+9LDPOcQ,P7n9mAPu4E6wi7Z8ekE0cg,,,Y,0,0,,,2014-02-17 15:27,2014-03-01 14:49,admin,admin,
571,128214,6764,35386,6640,0,N,N,N,CP_Drtn,TT_Task,DT_FixedDrtn,TK_NotStart,HHI.1040,"Fit,Weld for Manhole ,Nozzles on Shell",,0,0,20,0,0,0,20,0,0,0,,,,2014-03-19 07:00,2014-03-20 17:00,,2014-03-19 07:00,2014-03-20 17:00,2014-03-19 07:00,2014-03-20 17:00,2014-03-19 07:00,2014-03-20 17:00,2014-03-19 07:00,2014-03-20 17:00,,PT_Normal,,,,,ArRwTi7CQXqatcgFXug2Ag,ZCZBLSmadEe64LuCPyec7g,,,Y,0,0,,,2014-02-17 15:27,2014-03-01 14:49,admin,admin,
572,128215,6764,35387,6640,0,N,N,N,CP_Drtn,TT_Task,DT_FixedDrtn,TK_NotStart,HHI.1027,Erect & Tack Shell Course # 1 & Install Stagging Brackets,,0,0,20,0,420,420,20,48,0,48,,,,2014-03-13 07:00,2014-03-15 17:00,,2014-03-13 07:00,2014-03-15 17:00,2014-03-13 07:00,2014-03-15 17:00,2014-03-13 07:00,2014-03-15 17:00,2014-03-13 07:00,2014-03-15 17:00,,PT_Normal,,,,,qLrAQ3oESYaPtFDCHFxRbA,s5zhiuSATeqG2jTLPTEhQw,,,Y,0,0,,,2014-02-17 15:27,2014-03-01 14:49,admin,admin,
573,128216,6764,35387,6640,0,N,N,N,CP_Drtn,TT_Task,DT_FixedDrtn,TK_NotStart,HHI.1030,Weld Outer Vertical Seam/Install the Stairways support on Shell,,0,0,10,0,400,400,10,80,0,80,,,,2014-03-15 07:00,2014-03-15 17:00,,2014-03-15 07:00,2014-03-15 17:00,2014-03-15 07:00,2014-03-15 17:00,2014-03-15 07:00,2014-03-15 17:00,2014-03-15 07:00,2014-03-15 17:00,,PT_Normal,,,,,J+QRdao0Q/+txMEy8uPs7g,pHTagyh0QIuA0TUp0IGvhg,,,Y,0,0,,,2014-02-17 15:27,2014-03-01 14:49,admin,admin,
574,128217,6764,35387,6640,0,N,N,N,CP_Drtn,TT_Task,DT_FixedDrtn,TK_NotStart,HHI.1031,"Backgouge,Grinding & NDT Inside Vertical Seam",,0,0,10,0,90,90,10,33.066667,0,33.066667,,,,2014-03-16 07:00,2014-03-16 17:00,,2014-03-16 07:00,2014-03-16 17:00,2014-03-16 07:00,2014-03-16 17:00,2014-03-16 07:00,2014-03-16 17:00,2014-03-16 07:00,2014-03-16 17:00,,PT_Normal,,,,,fGGmlo+6RiSuDJF3zB6Y4w,gcuvXhrSRhG+jNLyE8ZpdQ,,,Y,0,0,,,2014-02-17 15:27,2014-03-01 14:49,admin,admin,
575,128218,6764,35387,6640,0,N,N,N,CP_Drtn,TT_Task,DT_FixedDrtn,TK_NotStart,HHI.1032,Weld Inside Vertical Seam,,0,0,10,0,181.333334,181.333334,10,85.333334,0,85.333334,,,,2014-03-17 07:00,2014-03-17 17:00,,2014-03-17 07:00,2014-03-17 17:00,2014-03-17 07:00,2014-03-17 17:00,2014-03-17 07:00,2014-03-17 17:00,2014-03-17 07:00,2014-03-17 17:00,,PT_Normal,,,,,b/1z5FtnQ+OINh9/JwnSAQ,xVg/IaTfRimmmOqjCNcvFg,,,Y,0,0,,,2014-02-17 15:27,2014-03-01 14:49,admin,admin,
576,128219,6764,35387,6640,0,N,N,N,CP_Drtn,TT_Task,DT_FixedDrtn,TK_NotStart,HHI.1028,"Quailty Check(Visual Inspection & PT,Air Leak Test for Shell Manholes& Nozzles)",,0,0,50,0,27.111111,27.111111,50,33.066667,0,33.066667,,,,2014-03-13 07:00,2014-03-18 17:00,,2014-03-13 07:00,2014-03-18 17:00,2014-03-13 07:00,2014-03-18 17:00,2014-03-13 07:00,2014-03-18 17:00,2014-03-13 07:00,2014-03-18 17:00,,PT_Normal,,,,,CB0FQE3mQp6BIhszgkztvA,KfRUdINiRHSPJb3Ee1lgiw,,,Y,0,0,,,2014-02-17 15:27,2014-03-01 14:49,admin,admin,
577,128220,6764,35387,6640,0,N,N,N,CP_Drtn,TT_Task,DT_FixedDrtn,TK_NotStart,HHI.1029,Fit up/Tack Shell #1 to Annular Plate,,0,0,10,0,0,0,10,0,0,0,,,,2014-03-15 07:00,2014-03-15 17:00,,2014-03-15 07:00,2014-03-15 17:00,2014-03-15 07:00,2014-03-15 17:00,2014-03-15 07:00,2014-03-15 17:00,2014-03-15 07:00,2014-03-15 17:00,,PT_Normal,,,,,gkzK2rSySnakriBoYdpXeg,cFX/3TGDH0OaFBWa611yJA,,,Y,0,0,,,2014-02-17 15:27,2014-03-01 14:49,admin,admin,
578,128221,6764,35387,6640,0,N,N,N,CP_Drtn,TT_Task,DT_FixedDrtn,TK_NotStart,HHI.1033,"Fit,Weld for Manhole ,Nozzles on Shell",,0,0,20,0,0,0,20,0,0,0,,,,2014-03-17 07:00,2014-03-18 17:00,,2014-03-17 07:00,2014-03-18 17:00,2014-03-17 07:00,2014-03-18 17:00,2014-03-17 07:00,2014-03-18 17:00,2014-03-17 07:00,2014-03-18 17:00,,PT_Normal,,,,,4rByuN+KTg2VOlF19FU0ig,qJpWPpbWVU+rYAyNWohVHg,,,Y,0,0,,,2014-02-17 15:27,2014-03-01 14:49,admin,admin,
579,128222,6764,35389,6640,0,N,N,N,CP_Drtn,TT_Task,DT_FixedDrtn,TK_NotStart,HHI.1073,Erect & Tack Shell Course # 3 & Install Stagging Brackets,,0,0,10,0,560,560,10,48,0,48,,,,2014-04-12 07:00,2014-04-12 17:00,,2014-04-12 07:00,2014-04-12 17:00,2014-04-12 07:00,2014-04-12 17:00,2014-04-12 07:00,2014-04-12 17:00,2014-04-12 07:00,2014-04-12 17:00,,PT_Normal,,,,,wDOMMZLzRNmFgwvdjPKHiw,2dz1oYikTD+qKYbUn5l5pg,,,Y,0,0,,,2014-02-17 15:27,2014-03-01 14:49,admin,admin,
580,128223,6764,35389,6640,0,N,N,N,CP_Drtn,TT_Task,DT_FixedDrtn,TK_NotStart,HHI.1074,Weld Outer Vertical Seam/Install the Stairways support on Shell,,0,0,10,0,202.666668,202.666668,10,85.333333,0,85.333333,,,,2014-04-13 07:00,2014-04-13 17:00,,2014-04-13 07:00,2014-04-13 17:00,2014-04-13 07:00,2014-04-13 17:00,2014-04-13 07:00,2014-04-13 17:00,2014-04-13 07:00,2014-04-13 17:00,,PT_Normal,,,,,TcsJc3plRtetyelWYxfCBQ,b81FzLBRR7unUoZULIC4SA,,,Y,0,0,,,2014-02-17 15:27,2014-03-01 14:49,admin,admin,
581,128224,6764,35389,6640,0,N,N,N,CP_Drtn,TT_Task,DT_FixedDrtn,TK_NotStart,HHI.1075,Backgouge & NDT Inside Vertical Seam,,0,0,10,0,108.444444,108.444444,10,33.066667,0,33.066667,,,,2014-04-14 07:00,2014-04-14 17:00,,2014-04-14 07:00,2014-04-14 17:00,2014-04-14 07:00,2014-04-14 17:00,2014-04-14 07:00,2014-04-14 17:00,2014-04-14 07:00,2014-04-14 17:00,,PT_Normal,,,,,yKmLo+mhQFybvPDI4xI/+w,1wLJNBaISCuWLUiygZ+70Q,,,Y,0,0,,,2014-02-17 15:27,2014-03-01 14:49,admin,admin,
582,128225,6764,35389,6640,0,N,N,N,CP_Drtn,TT_Task,DT_FixedDrtn,TK_NotStart,HHI.1076,Weld Inside Vertical Seam,,0,0,10,0,202.666668,202.666668,10,85.333333,0,85.333333,,,,2014-04-15 07:00,2014-04-15 17:00,,2014-04-15 07:00,2014-04-15 17:00,2014-04-15 07:00,2014-04-15 17:00,2014-04-15 07:00,2014-04-15 17:00,2014-04-15 07:00,2014-04-15 17:00,,PT_Normal,,,,,ndwaE82dQN6HgHBGmmAp1A,i55pPxlrRnOySjeT/tCHGQ,,,Y,0,0,,,2014-02-17 15:27,2014-03-01 14:49,admin,admin,
583,128226,6764,35389,6640,0,N,N,N,CP_Drtn,TT_Task,DT_FixedDrtn,TK_NotStart,HHI.1077,"Weld Outer Horizontal Seam between Shell Course # 2 & 3""""",,0,0,20,0,608,608,20,128,0,128,,,,2014-04-16 07:00,2014-04-17 17:00,,2014-04-16 07:00,2014-04-17 17:00,2014-04-16 07:00,2014-04-17 17:00,2014-04-16 07:00,2014-04-17 17:00,2014-04-16 07:00,2014-04-17 17:00,,PT_Normal,,,,,KnRR9OfaToeV7QoYwFEKzQ,5sSik256QDa8r1CkbUoxjw,,,Y,0,0,,,2014-02-17 15:27,2014-03-01 14:49,admin,admin,
584,128227,6764,35389,6640,0,N,N,N,CP_Drtn,TT_Task,DT_FixedDrtn,TK_NotStart,HHI.1078,"Backgouge & NDT Inside Horizontal Seam between Shell Course# 2 & 3""""",,0,0,10,0,108.444444,108.444444,10,33.066667,0,33.066667,,,,2014-04-19 07:00,2014-04-19 17:00,,2014-04-19 07:00,2014-04-19 17:00,2014-04-19 07:00,2014-04-19 17:00,2014-04-19 07:00,2014-04-19 17:00,2014-04-19 07:00,2014-04-19 17:00,,PT_Normal,,,,,7UdrBPMqR16fIskGd7/yBw,oScK5bz0QuGOsz1xLzqf7g,,,Y,0,0,,,2014-02-17 15:27,2014-03-01 14:49,admin,admin,
585,128228,6764,35389,6640,0,N,N,N,CP_Drtn,TT_Task,DT_FixedDrtn,TK_NotStart,HHI.1079,"Weld Inner Horizontal Seam between Shell Course # 2 & 3""""",,0,0,10,0,608,608,10,128,0,128,,,,2014-04-20 07:00,2014-04-20 17:00,,2014-04-20 07:00,2014-04-20 17:00,2014-04-20 07:00,2014-04-20 17:00,2014-04-20 07:00,2014-04-20 17:00,2014-04-20 07:00,2014-04-20 17:00,,PT_Normal,,,,,6D4Fv2aJTbSl1QjmA/MoCA,jHCz8XrHTkuWOvxFJfIXfQ,,,Y,0,0,,,2014-02-17 15:27,2014-03-01 14:49,admin,admin,
586,128229,6764,35389,6640,0,N,N,N,CP_Drtn,TT_Task,DT_FixedDrtn,TK_NotStart,HHI.1080,Quailty Check(Visual Inspection),,0,0,80,0,32,32,80,42.666666,0,42.666666,,,,2014-04-12 07:00,2014-04-20 17:00,,2014-04-12 07:00,2014-04-20 17:00,2014-04-12 07:00,2014-04-20 17:00,2014-04-12 07:00,2014-04-20 17:00,2014-04-12 07:00,2014-04-20 17:00,,PT_Normal,,,,,vNBKRuNoQjWXpDUb1Um2Pw,94nWQnmQQbmZsEpHP4PsDQ,,,Y,0,0,,,2014-02-17 15:27,2014-03-01 14:49,admin,admin,
587,128230,6764,35390,6640,0,N,N,N,CP_Drtn,TT_Task,DT_FixedDrtn,TK_NotStart,HHI.1081,Perform RT for Tank#1 & #2,,0,0,10,0,0,0,10,0,0,0,,,,2014-04-21 07:00,2014-04-21 17:00,,2014-04-21 07:00,2014-04-21 17:00,2014-04-21 07:00,2014-04-21 17:00,2014-04-21 07:00,2014-04-21 17:00,2014-04-21 07:00,2014-04-21 17:00,,PT_Normal,,,,,lPh/aL5pQVm/XZQ8rPyd+w,aUP+CvH/Rk+3o/Lzz8hirw,,,Y,0,0,,,2014-02-17 15:27,2014-03-01 14:49,admin,admin,
588,128231,6764,35391,6640,0,N,N,N,CP_Drtn,TT_Task,DT_FixedDrtn,TK_NotStart,HHI.1065,Erect & Tack Shell Course # 3 & Install Stagging Brackets,,0,0,10,0,500,500,10,48,0,48,,,,2014-04-09 07:00,2014-04-09 17:00,,2014-04-09 07:00,2014-04-09 17:00,2014-04-09 07:00,2014-04-09 17:00,2014-04-09 07:00,2014-04-09 17:00,2014-04-09 07:00,2014-04-09 17:00,,PT_Normal,,,,,42IBGS8fT4OiSG5iC6JXHg,Hz2/2CrFSEyjfCNLFS/qdw,,,Y,0,0,,,2014-02-17 15:27,2014-03-01 14:49,admin,admin,
589,128232,6764,35391,6640,0,N,N,N,CP_Drtn,TT_Task,DT_FixedDrtn,TK_NotStart,HHI.1066,Weld Outer Vertical Seam/Install the Stairways support on Shell,,0,0,10,0,160,160,10,85.333334,0,85.333334,,,,2014-04-10 07:00,2014-04-10 17:00,,2014-04-10 07:00,2014-04-10 17:00,2014-04-10 07:00,2014-04-10 17:00,2014-04-10 07:00,2014-04-10 17:00,2014-04-10 07:00,2014-04-10 17:00,,PT_Normal,,,,,ZA/KD0lxRAeTX0cjunmKnQ,VxJcE5hBQUaQLsKUyxuEoA,,,Y,0,0,,,2014-02-17 15:27,2014-03-01 14:49,admin,admin,
590,128233,6764,35391,6640,0,N,N,N,CP_Drtn,TT_Task,DT_FixedDrtn,TK_NotStart,HHI.1067,Backgouge & NDT Inside Vertical Seam,,0,0,10,0,80,80,10,33.066667,0,33.066667,,,,2014-04-12 07:00,2014-04-12 17:00,,2014-04-12 07:00,2014-04-12 17:00,2014-04-12 07:00,2014-04-12 17:00,2014-04-12 07:00,2014-04-12 17:00,2014-04-12 07:00,2014-04-12 17:00,,PT_Normal,,,,,/iQbsB3YTMmT7PjeD2X9mg,aznCFY3aTfaHQJ2QQcPEWg,,,Y,0,0,,,2014-02-17 15:27,2014-03-01 14:49,admin,admin,
591,128234,6764,35391,6640,0,N,N,N,CP_Drtn,TT_Task,DT_FixedDrtn,TK_NotStart,HHI.1068,Weld Inside Vertical Seam,,0,0,10,0,202.666668,202.666668,10,85.333333,0,85.333333,,,,2014-04-13 07:00,2014-04-13 17:00,,2014-04-13 07:00,2014-04-13 17:00,2014-04-13 07:00,2014-04-13 17:00,2014-04-13 07:00,2014-04-13 17:00,2014-04-13 07:00,2014-04-13 17:00,,PT_Normal,,,,,MASSRy2RQgeXE0j06llgkg,/4pMBGHgS7qfoA8tArLxJA,,,Y,0,0,,,2014-02-17 15:27,2014-03-01 14:49,admin,admin,
592,128235,6764,35391,6640,0,N,N,N,CP_Drtn,TT_Task,DT_FixedDrtn,TK_NotStart,HHI.1069,"Weld Outer Horizontal Seam between Shell Course # 2 & 3""""",,0,0,20,0,608,608,20,128,0,128,,,,2014-04-14 07:00,2014-04-15 17:00,,2014-04-14 07:00,2014-04-15 17:00,2014-04-14 07:00,2014-04-15 17:00,2014-04-14 07:00,2014-04-15 17:00,2014-04-14 07:00,2014-04-15 17:00,,PT_Normal,,,,,3Q41cQmxR2O3pmf7938c4A,x/NWNRuSSYSf+GCR2xU9Iw,,,Y,0,0,,,2014-02-17 15:27,2014-03-01 14:49,admin,admin,
593,128236,6764,35391,6640,0,N,N,N,CP_Drtn,TT_Task,DT_FixedDrtn,TK_NotStart,HHI.1070,"Backgouge & NDT Inside Horizontal Seam between Shell Course# 2 & 3""""",,0,0,10,0,87.111111,87.111111,10,33.066667,0,33.066667,,,,2014-04-16 07:00,2014-04-16 17:00,,2014-04-16 07:00,2014-04-16 17:00,2014-04-16 07:00,2014-04-16 17:00,2014-04-16 07:00,2014-04-16 17:00,2014-04-16 07:00,2014-04-16 17:00,,PT_Normal,,,,,c4OOW7HyRemojnYfTgPqwA,pVoJfkPnTdWxibuJGr32lA,,,Y,0,0,,,2014-02-17 15:27,2014-03-01 14:49,admin,admin,
594,128237,6764,35391,6640,0,N,N,N,CP_Drtn,TT_Task,DT_FixedDrtn,TK_NotStart,HHI.1071,"Weld Inner Horizontal Seam between Shell Course # 2 & 3""""",,0,0,10,0,608,608,10,128,0,128,,,,2014-04-17 07:00,2014-04-17 17:00,,2014-04-17 07:00,2014-04-17 17:00,2014-04-17 07:00,2014-04-17 17:00,2014-04-17 07:00,2014-04-17 17:00,2014-04-17 07:00,2014-04-17 17:00,,PT_Normal,,,,,nNL4KVeFS4ClyWKoUaa3Gg,Ris02MCgSLWW7QFKFBmSsQ,,,Y,0,0,,,2014-02-17 15:27,2014-03-01 14:49,admin,admin,
595,128238,6764,35391,6640,0,N,N,N,CP_Drtn,TT_Task,DT_FixedDrtn,TK_NotStart,HHI.1072,Quailty Check(Visual Inspection),,0,0,80,0,27.111111,27.111111,80,33.066667,0,33.066667,,,,2014-04-09 07:00,2014-04-17 17:00,,2014-04-09 07:00,2014-04-17 17:00,2014-04-09 07:00,2014-04-17 17:00,2014-04-09 07:00,2014-04-17 17:00,2014-04-09 07:00,2014-04-17 17:00,,PT_Normal,,,,,U1y/eLgtSHa6CK0jhPKcVg,SrrmHBlxS0+XK3Si/7rdfg,,,Y,0,0,,,2014-02-17 15:27,2014-03-01 14:49,admin,admin,
596,128239,6764,35393,6640,0,N,N,N,CP_Drtn,TT_Task,DT_FixedDrtn,TK_NotStart,HHI.1146,Erect & Tack Shell Course # 6 & Install Stagging Brackets,,0,0,10,0,380,380,10,48,0,48,,,,2014-06-04 07:00,2014-06-04 17:00,,2014-06-04 07:00,2014-06-04 17:00,2014-06-04 07:00,2014-06-04 17:00,2014-06-04 07:00,2014-06-04 17:00,2014-06-04 07:00,2014-06-04 17:00,,PT_Normal,,,,,r0NpoI58Sh+r6iRb/q5hfQ,doUl0GNQbkubHm8J3bcBnw,,,Y,0,0,,,2014-02-17 15:27,2014-03-01 14:49,admin,admin,
597,128240,6764,35393,6640,0,N,N,N,CP_Drtn,TT_Task,DT_FixedDrtn,TK_NotStart,HHI.1147,Weld Outer Vertical Seam /Install the Stairways support on Shell,,0,0,10,0,160,160,10,42.666666,0,42.666666,,,,2014-06-05 07:00,2014-06-05 17:00,,2014-06-05 07:00,2014-06-05 17:00,2014-06-05 07:00,2014-06-05 17:00,2014-06-05 07:00,2014-06-05 17:00,2014-06-05 07:00,2014-06-05 17:00,,PT_Normal,,,,,E/wxAGP0SdCFMhLkMxZfqg,ssDxIBpK80CbnbeP7P0wfg,,,Y,0,0,,,2014-02-17 15:27,2014-03-01 14:49,admin,admin,
598,128241,6764,35393,6640,0,N,N,N,CP_Drtn,TT_Task,DT_FixedDrtn,TK_NotStart,HHI.1148,Backgouge & NDT Inside Vertical Seam,,0,0,10,0,101.333332,101.333332,10,42.666666,0,42.666666,,,,2014-06-07 07:00,2014-06-07 17:00,,2014-06-07 07:00,2014-06-07 17:00,2014-06-07 07:00,2014-06-07 17:00,2014-06-07 07:00,2014-06-07 17:00,2014-06-07 07:00,2014-06-07 17:00,,PT_Normal,,,,,aaJndLhMR3228RaOlTMmgw,ErQvIHuYwUySJTKD4cWcug,,,Y,0,0,,,2014-02-17 15:27,2014-03-01 14:49,admin,admin,
599,128242,6764,35393,6640,0,N,N,N,CP_Drtn,TT_Task,DT_FixedDrtn,TK_NotStart,HHI.1149,Weld Inside Vertical Seam,,0,0,10,0,160,160,10,42.666666,0,42.666666,,,,2014-06-08 07:00,2014-06-08 17:00,,2014-06-08 07:00,2014-06-08 17:00,2014-06-08 07:00,2014-06-08 17:00,2014-06-08 07:00,2014-06-08 17:00,2014-06-08 07:00,2014-06-08 17:00,,PT_Normal,,,,,DDYkBB17Ti6/R899rhGHdg,ZL731rNOVkKdFO21k8xHBw,,,Y,0,0,,,2014-02-17 15:27,2014-03-01 14:49,admin,admin,
600,128243,6764,35393,6640,0,N,N,N,CP_Drtn,TT_Task,DT_FixedDrtn,TK_NotStart,HHI.1150,"""""Weld Outer Horizontal Seam between Shell Course # 5 & 6""""",,0,0,10,0,405.333336,405.333336,10,85.333333,0,85.333333,,,,2014-06-09 07:00,2014-06-09 17:00,,2014-06-09 07:00,2014-06-09 17:00,2014-06-09 07:00,2014-06-09 17:00,2014-06-09 07:00,2014-06-09 17:00,2014-06-09 07:00,2014-06-09 17:00,,PT_Normal,,,,,2XQ08UeJSh+1a0p4XXcyrQ,T9n5Mwd11U2npvHurBZbSg,,,Y,0,0,,,2014-02-17 15:27,2014-03-01 14:49,admin,admin,
601,128244,6764,35393,6640,0,N,N,N,CP_Drtn,TT_Task,DT_FixedDrtn,TK_NotStart,HHI.1151,"""""Backgouge & NDT Inside Horizontal Seam between Shell Course# 5 & 6""""",,0,0,10,0,108.444444,108.444444,10,33.066667,0,33.066667,,,,2014-06-10 07:00,2014-06-10 17:00,,2014-06-10 07:00,2014-06-10 17:00,2014-06-10 07:00,2014-06-10 17:00,2014-06-10 07:00,2014-06-10 17:00,2014-06-10 07:00,2014-06-10 17:00,,PT_Normal,,,,,7bo1MDe+RkWtkMl3lWG0cg,AtUcbUyXrkSvatzsyAyD1A,,,Y,0,0,,,2014-02-17 15:27,2014-03-01 14:49,admin,admin,
602,128245,6764,35393,6640,0,N,N,N,CP_Drtn,TT_Task,DT_FixedDrtn,TK_NotStart,HHI.1152,"Weld Inner Horizontal Seam between Shell Course # 5 & 6""""/Fit,Weld Nozzle on Shell",,0,0,10,0,202.666668,202.666668,10,85.333333,0,85.333333,,,,2014-06-11 07:00,2014-06-11 17:00,,2014-06-11 07:00,2014-06-11 17:00,2014-06-11 07:00,2014-06-11 17:00,2014-06-11 07:00,2014-06-11 17:00,2014-06-11 07:00,2014-06-11 17:00,,PT_Normal,,,,,QXY5IMdhSA6pHpJgGzApmA,JqmRcxdYXESRrN9YPKXLQg,,,Y,0,0,,,2014-02-17 15:27,2014-03-01 14:49,admin,admin,
603,128246,6764,35393,6640,0,N,N,N,CP_Drtn,TT_Task,DT_FixedDrtn,TK_NotStart,HHI.1153,"Quailty Check(Visual Inspection,PT,Air Leak Test for Shell Nozzle))",,0,0,60,0,27.111111,27.111111,60,33.066667,0,33.066667,,,,2014-06-05 07:00,2014-06-11 17:00,,2014-06-05 07:00,2014-06-11 17:00,2014-06-05 07:00,2014-06-11 17:00,2014-06-05 07:00,2014-06-11 17:00,2014-06-05 07:00,2014-06-11 17:00,,PT_Normal,,,,,MzTJDdfwTO2zXZ1rWWX3iQ,mxOUvJ8kNECcPMKH2oFd/A,,,Y,0,0,,,2014-02-17 15:27,2014-03-01 14:49,admin,admin,
604,128247,6764,35394,6640,0,N,N,N,CP_Drtn,TT_Task,DT_FixedDrtn,TK_NotStart,HHI.1135,Erect & Tack Shell Course # 6 & Internal Stagging Brackets,,0,0,10,0,400,400,10,48,0,48,,,,2014-05-25 07:00,2014-05-25 17:00,,2014-05-25 07:00,2014-05-25 17:00,2014-05-25 07:00,2014-05-25 17:00,2014-05-25 07:00,2014-05-25 17:00,2014-05-25 07:00,2014-05-25 17:00,,PT_Normal,,,,,jjVkxJiZTq+zZHU7I4y6Dg,Jycex8EkpEa+2DFfqB9NHQ,,,Y,0,0,,,2014-02-17 15:27,2014-03-01 14:49,admin,admin,
605,128248,6764,35394,6640,0,N,N,N,CP_Drtn,TT_Task,DT_FixedDrtn,TK_NotStart,HHI.1136,Weld Outer Vertical Seam /Install the Stairways support on Shell,,0,0,10,0,181.333332,181.333332,10,42.666666,0,42.666666,,,,2014-05-26 07:00,2014-05-26 17:00,,2014-05-26 07:00,2014-05-26 17:00,2014-05-26 07:00,2014-05-26 17:00,2014-05-26 07:00,2014-05-26 17:00,2014-05-26 07:00,2014-05-26 17:00,,PT_Normal,,,,,Vb4ncZgYQ2uShX4+QVWkVw,YAAoRPBWpUCZ6d4q0ftFlA,,,Y,0,0,,,2014-02-17 15:27,2014-03-01 14:49,admin,admin,
606,128249,6764,35394,6640,0,N,N,N,CP_Drtn,TT_Task,DT_FixedDrtn,TK_NotStart,HHI.1137,Backgouge & NDT Inside Vertical Seam,,0,0,10,0,101.333332,101.333332,10,42.666666,0,42.666666,,,,2014-05-27 07:00,2014-05-27 17:00,,2014-05-27 07:00,2014-05-27 17:00,2014-05-27 07:00,2014-05-27 17:00,2014-05-27 07:00,2014-05-27 17:00,2014-05-27 07:00,2014-05-27 17:00,,PT_Normal,,,,,xHEX/1R4QkWbydp4T2QPxg,E7QDphM6UkGAEz1uR1g4UA,,,Y,0,0,,,2014-02-17 15:27,2014-03-01 14:49,admin,admin,
607,128250,6764,35394,6640,0,N,N,N,CP_Drtn,TT_Task,DT_FixedDrtn,TK_NotStart,HHI.1138,Weld Inside Vertical Seam,,0,0,10,0,191.999998,191.999998,10,42.666666,0,42.666666,,,,2014-05-28 07:00,2014-05-28 17:00,,2014-05-28 07:00,2014-05-28 17:00,2014-05-28 07:00,2014-05-28 17:00,2014-05-28 07:00,2014-05-28 17:00,2014-05-28 07:00,2014-05-28 17:00,,PT_Normal,,,,,AfzbcfUcRyqPc6dz8/oGrA,DumbRP5mh0aaZMtWsA89kA,,,Y,0,0,,,2014-02-17 15:27,2014-03-01 14:49,admin,admin,
608,128251,6764,35394,6640,0,N,N,N,CP_Drtn,TT_Task,DT_FixedDrtn,TK_NotStart,HHI.1139,"""""Weld Outer Horizontal Seam between Shell Course # 5 & 6""""",,0,0,10,0,405.333336,405.333336,10,85.333333,0,85.333333,,,,2014-05-29 07:00,2014-05-29 17:00,,2014-05-29 07:00,2014-05-29 17:00,2014-05-29 07:00,2014-05-29 17:00,2014-05-29 07:00,2014-05-29 17:00,2014-05-29 07:00,2014-05-29 17:00,,PT_Normal,,,,,IFjE0sriShWWyEEFa1uZlA,dM7b5fkIfkGbv6zypDNCeg,,,Y,0,0,,,2014-02-17 15:27,2014-03-01 14:49,admin,admin,
609,128252,6764,35394,6640,0,N,N,N,CP_Drtn,TT_Task,DT_FixedDrtn,TK_NotStart,HHI.1140,"""""Backgouge & NDT Inside Horizontal Seam between Shell Course# 5 & 6""""",,0,0,10,0,108.444444,108.444444,10,33.066667,0,33.066667,,,,2014-05-31 07:00,2014-05-31 17:00,,2014-05-31 07:00,2014-05-31 17:00,2014-05-31 07:00,2014-05-31 17:00,2014-05-31 07:00,2014-05-31 17:00,2014-05-31 07:00,2014-05-31 17:00,,PT_Normal,,,,,aminQ4FWS8GRlZ00UjJLqQ,cKRrtDSwFE67RjGDgm7KPw,,,Y,0,0,,,2014-02-17 15:27,2014-03-01 14:49,admin,admin,
610,128253,6764,35394,6640,0,N,N,N,CP_Drtn,TT_Task,DT_FixedDrtn,TK_NotStart,HHI.1141,"Weld Inner Horizontal Seam between Shell Course # 5 & 6""""/Fit,Weld Nozzle on Shell",,0,0,10,0,202.666668,202.666668,10,85.333333,0,85.333333,,,,2014-06-01 07:00,2014-06-01 17:00,,2014-06-01 07:00,2014-06-01 17:00,2014-06-01 07:00,2014-06-01 17:00,2014-06-01 07:00,2014-06-01 17:00,2014-06-01 07:00,2014-06-01 17:00,,PT_Normal,,,,,3jNbOzrIQ72q7rFU0DCNoA,MRz+cPrhdkGq+OmtcxAh+w,,,Y,0,0,,,2014-02-17 15:27,2014-03-01 14:49,admin,admin,
611,128254,6764,35394,6640,0,N,N,N,CP_Drtn,TT_Task,DT_FixedDrtn,TK_NotStart,HHI.1142,"Quailty Check(Visual Inspection,PT,Air Leak Test for Shell Nozzle))",,0,0,60,0,34.222222,34.222222,60,33.066667,0,33.066667,,,,2014-05-26 07:00,2014-06-01 17:00,,2014-05-26 07:00,2014-06-01 17:00,2014-05-26 07:00,2014-06-01 17:00,2014-05-26 07:00,2014-06-01 17:00,2014-05-26 07:00,2014-06-01 17:00,,PT_Normal,,,,,EhxBEvQEQRqeK4A/1Zl8BQ,Sw9o81O+q0meLlDSPogAqA,,,Y,0,0,,,2014-02-17 15:27,2014-03-01 14:49,admin,admin,
612,128255,6764,35395,6640,0,N,N,N,CP_Drtn,TT_Task,DT_FixedDrtn,TK_NotStart,HHI.1143,Erect & Tack Wind Girder,,0,0,10,0,276.888892,276.888892,10,11.377778,0,11.377778,,,,2014-06-02 07:00,2014-06-02 17:00,,2014-06-02 07:00,2014-06-02 17:00,2014-06-02 07:00,2014-06-02 17:00,2014-06-02 07:00,2014-06-02 17:00,2014-06-02 07:00,2014-06-02 17:00,,PT_Normal,,,,,F2D9ZB4NTNeVIvXmQrc/Mg,KAzitPMl7UWCseBPgg4iLQ,,,Y,0,0,,,2014-02-17 15:27,2014-03-01 14:49,admin,admin,
613,128256,6764,35395,6640,0,N,N,N,CP_Drtn,TT_Task,DT_FixedDrtn,TK_NotStart,HHI.1144,Weld Wind Girder,,0,0,10,0,608.000004,608.000004,10,85.333333,0,85.333333,,,,2014-06-03 07:00,2014-06-03 17:00,,2014-06-03 07:00,2014-06-03 17:00,2014-06-03 07:00,2014-06-03 17:00,2014-06-03 07:00,2014-06-03 17:00,2014-06-03 07:00,2014-06-03 17:00,,PT_Normal,,,,,cUhpgZ+ORhWxvv3ryy0AvA,wlpmOCPRD0KbK63oGvMfHw,,,Y,0,0,,,2014-02-17 15:27,2014-03-01 14:49,admin,admin,
614,128257,6764,35395,6640,0,N,N,N,CP_Drtn,TT_Task,DT_FixedDrtn,TK_NotStart,HHI.1145,Quailty Check(Visual Inspection & PT),,0,0,20,0,0,0,20,0,0,0,,,,2014-06-02 07:00,2014-06-03 17:00,,2014-06-02 07:00,2014-06-03 17:00,2014-06-02 07:00,2014-06-03 17:00,2014-06-02 07:00,2014-06-03 17:00,2014-06-02 07:00,2014-06-03 17:00,,PT_Normal,,,,,8cMUlDRaRomt9Vc7jxcEWg,xmFaSTAt5EqEkCUP6IvT5A,,,Y,0,0,,,2014-02-17 15:27,2014-03-01 14:49,admin,admin,
615,128258,6764,35396,6640,0,N,N,N,CP_Drtn,TT_Task,DT_FixedDrtn,TK_NotStart,HHI.1154,Erect & Tack Wind Girder,,0,0,10,0,262.666669,262.666669,10,11.377778,0,11.377778,,,,2014-06-12 07:00,2014-06-12 17:00,,2014-06-12 07:00,2014-06-12 17:00,2014-06-12 07:00,2014-06-12 17:00,2014-06-12 07:00,2014-06-12 17:00,2014-06-12 07:00,2014-06-12 17:00,,PT_Normal,,,,,Zr4jsHlwTu2mmyjp7C4CqQ,AgG5utLty0SlNNs+luzC7w,,,Y,0,0,,,2014-02-17 15:27,2014-03-01 14:49,admin,admin,
616,128259,6764,35396,6640,0,N,N,N,CP_Drtn,TT_Task,DT_FixedDrtn,TK_NotStart,HHI.1155,Weld Wind Girder,,0,0,10,0,576.000003,576.000003,10,85.333334,0,85.333334,,,,2014-06-14 07:00,2014-06-14 17:00,,2014-06-14 07:00,2014-06-14 17:00,2014-06-14 07:00,2014-06-14 17:00,2014-06-14 07:00,2014-06-14 17:00,2014-06-14 07:00,2014-06-14 17:00,,PT_Normal,,,,,7lCqCg/gQ+OosRM23xr0Cw,XGpo5Pbsu0ypnBNL1G9Pvg,,,Y,0,0,,,2014-02-17 15:27,2014-03-01 14:49,admin,admin,
617,128260,6764,35396,6640,0,N,N,N,CP_Drtn,TT_Task,DT_FixedDrtn,TK_NotStart,HHI.1156,Quailty Check(Visual Inspection & PT),,0,0,20,0,0,0,20,0,0,0,,,,2014-06-12 07:00,2014-06-14 17:00,,2014-06-12 07:00,2014-06-14 17:00,2014-06-12 07:00,2014-06-14 17:00,2014-06-12 07:00,2014-06-14 17:00,2014-06-12 07:00,2014-06-14 17:00,,PT_Normal,,,,,4tOINXIzTH+nk0m+m1XP9A,Vf3VJRlbf0OtNKG6YQudGw,,,Y,0,0,,,2014-02-17 15:27,2014-03-01 14:49,admin,admin,
618,128261,6764,35397,6640,0,N,N,N,CP_Drtn,TT_Task,DT_FixedDrtn,TK_NotStart,HHI.1157,Perform RT for Tank#1 & #2,,0,0,10,0,0,0,10,0,0,0,,,,2014-06-15 07:00,2014-06-15 17:00,,2014-06-15 07:00,2014-06-15 17:00,2014-06-15 07:00,2014-06-15 17:00,2014-06-15 07:00,2014-06-15 17:00,2014-06-15 07:00,2014-06-15 17:00,,PT_Normal,,,,,Sn4TowiQShescITn22jLpg,lIoEQjjNck+yoYvMymY4NQ,,,Y,0,0,,,2014-02-17 15:27,2014-03-01 14:49,admin,admin,
619,128262,6764,35399,6640,0,N,N,N,CP_Drtn,TT_Task,DT_FixedDrtn,TK_NotStart,HHI.1082,Erect & Tack Shell Course # 4 & Install Stagging Brackets,,0,0,10,0,480,480,10,48,0,48,,,,2014-04-21 07:00,2014-04-21 17:00,,2014-04-21 07:00,2014-04-21 17:00,2014-04-21 07:00,2014-04-21 17:00,2014-04-21 07:00,2014-04-21 17:00,2014-04-21 07:00,2014-04-21 17:00,,PT_Normal,,,,,UEK/VvUDTgSl4PgMcIKSKg,vYNQ4nt7Rjq0KyUH4ACYUQ,,,Y,0,0,,,2014-02-17 15:27,2014-03-01 14:49,admin,admin,
620,128263,6764,35399,6640,0,N,N,N,CP_Drtn,TT_Task,DT_FixedDrtn,TK_NotStart,HHI.1083,Weld Outer Vertical Seam/Install the Stairways support on Shell,,0,0,10,0,160,160,10,85.333334,0,85.333334,,,,2014-04-22 07:00,2014-04-22 17:00,,2014-04-22 07:00,2014-04-22 17:00,2014-04-22 07:00,2014-04-22 17:00,2014-04-22 07:00,2014-04-22 17:00,2014-04-22 07:00,2014-04-22 17:00,,PT_Normal,,,,,7NOMJzL+QSmU0HisqNzZkQ,zM0ry8s4TcSpKrBwurgq8Q,,,Y,0,0,,,2014-02-17 15:27,2014-03-01 14:49,admin,admin,
621,128264,6764,35399,6640,0,N,N,N,CP_Drtn,TT_Task,DT_FixedDrtn,TK_NotStart,HHI.1084,Backgouge & NDT Inside Vertical Seam,,0,0,10,0,80,80,10,33.066667,0,33.066667,,,,2014-04-23 07:00,2014-04-23 17:00,,2014-04-23 07:00,2014-04-23 17:00,2014-04-23 07:00,2014-04-23 17:00,2014-04-23 07:00,2014-04-23 17:00,2014-04-23 07:00,2014-04-23 17:00,,PT_Normal,,,,,JrArYzmwRuSVl/Bd9HVGOg,8XZPDLNHTB6oPxonUstkxQ,,,Y,0,0,,,2014-02-17 15:27,2014-03-01 14:49,admin,admin,
622,128265,6764,35399,6640,0,N,N,N,CP_Drtn,TT_Task,DT_FixedDrtn,TK_NotStart,HHI.1085,Weld Inside Vertical Seam,,0,0,10,0,202.666668,202.666668,10,85.333333,0,85.333333,,,,2014-04-24 07:00,2014-04-24 17:00,,2014-04-24 07:00,2014-04-24 17:00,2014-04-24 07:00,2014-04-24 17:00,2014-04-24 07:00,2014-04-24 17:00,2014-04-24 07:00,2014-04-24 17:00,,PT_Normal,,,,,3gWZoCe7SHiLbOyyAW8vaw,/qnSxV5TRI6YTuXiWydigA,,,Y,0,0,,,2014-02-17 15:27,2014-03-01 14:49,admin,admin,
623,128266,6764,35399,6640,0,N,N,N,CP_Drtn,TT_Task,DT_FixedDrtn,TK_NotStart,HHI.1086,"Weld Outer Horizontal Seam between Shell Course # 3 & 4""""",,0,0,20,0,388.266664,388.266664,20,72.96,0,72.96,,,,2014-04-26 07:00,2014-04-27 17:00,,2014-04-26 07:00,2014-04-27 17:00,2014-04-26 07:00,2014-04-27 17:00,2014-04-26 07:00,2014-04-27 17:00,2014-04-26 07:00,2014-04-27 17:00,,PT_Normal,,,,,mNxv9rgMQ7u1LGYolxU1dg,tNRyVYCbQKeK3AhtrYm9Yw,,,Y,0,0,,,2014-02-17 15:27,2014-03-01 14:49,admin,admin,
624,128267,6764,35399,6640,0,N,N,N,CP_Drtn,TT_Task,DT_FixedDrtn,TK_NotStart,HHI.1087,"Backgouge & NDT Inside Horizontal Seam between Shell Course# 3 & 4""""",,0,0,10,0,101.333333,101.333333,10,33.066667,0,33.066667,,,,2014-04-28 07:00,2014-04-28 17:00,,2014-04-28 07:00,2014-04-28 17:00,2014-04-28 07:00,2014-04-28 17:00,2014-04-28 07:00,2014-04-28 17:00,2014-04-28 07:00,2014-04-28 17:00,,PT_Normal,,,,,nWQfh41sTt6k8VDTKE8vLw,r8PHxJ42QhG2mfoRI8tayg,,,Y,0,0,,,2014-02-17 15:27,2014-03-01 14:49,admin,admin,
625,128268,6764,35399,6640,0,N,N,N,CP_Drtn,TT_Task,DT_FixedDrtn,TK_NotStart,HHI.1088,"Weld Inner Horizontal Seam between Shell Course # 3 & 4""""/Fit,Weld Nozzle on Shell",,0,0,10,0,388.266664,388.266664,10,72.96,0,72.96,,,,2014-04-29 07:00,2014-04-29 17:00,,2014-04-29 07:00,2014-04-29 17:00,2014-04-29 07:00,2014-04-29 17:00,2014-04-29 07:00,2014-04-29 17:00,2014-04-29 07:00,2014-04-29 17:00,,PT_Normal,,,,,7KQu7SUtQ8ySsgobf7cqxA,p1t3yFSARvOHHXiwUSkFgA,,,Y,0,0,,,2014-02-17 15:27,2014-03-01 14:49,admin,admin,
626,128269,6764,35399,6640,0,N,N,N,CP_Drtn,TT_Task,DT_FixedDrtn,TK_NotStart,HHI.1089,"Quailty Check(Visual Inspection,PT,Air Leak Test for Shell Nozzle)",,0,0,80,0,34.222222,34.222222,80,33.066667,0,33.066667,,,,2014-04-21 07:00,2014-04-29 17:00,,2014-04-21 07:00,2014-04-29 17:00,2014-04-21 07:00,2014-04-29 17:00,2014-04-21 07:00,2014-04-29 17:00,2014-04-21 07:00,2014-04-29 17:00,,PT_Normal,,,,,bpBP/87+QF+4rf9WUESDoA,MdcOImQ2Qa63hbEXRuGvTw,,,Y,0,0,,,2014-02-17 15:27,2014-03-01 14:49,admin,admin,
627,128270,6764,35400,6640,0,N,N,N,CP_Drtn,TT_Task,DT_FixedDrtn,TK_NotStart,HHI.1090,Erect & Tack Shell Course # 4 & Install Stagging Brackets,,0,0,10,0,560,560,10,48,0,48,,,,2014-04-23 07:00,2014-04-23 17:00,,2014-04-23 07:00,2014-04-23 17:00,2014-04-23 07:00,2014-04-23 17:00,2014-04-23 07:00,2014-04-23 17:00,2014-04-23 07:00,2014-04-23 17:00,,PT_Normal,,,,,2GR+WJ54R7SGLosyE+DyAg,bc7Y6cE6QB+g+afXYFFsjw,,,Y,0,0,,,2014-02-17 15:27,2014-03-01 14:49,admin,admin,
628,128271,6764,35400,6640,0,N,N,N,CP_Drtn,TT_Task,DT_FixedDrtn,TK_NotStart,HHI.1091,Weld Outer Vertical Seam/Install the Stairways support on Shell,,0,0,10,0,192.000001,192.000001,10,85.333334,0,85.333334,,,,2014-04-24 07:00,2014-04-24 17:00,,2014-04-24 07:00,2014-04-24 17:00,2014-04-24 07:00,2014-04-24 17:00,2014-04-24 07:00,2014-04-24 17:00,2014-04-24 07:00,2014-04-24 17:00,,PT_Normal,,,,,KHfm8TsARiSldCst3Cl8Xg,Gjh1garISTWPsmBTNzGvDQ,,,Y,0,0,,,2014-02-17 15:27,2014-03-01 14:49,admin,admin,
629,128272,6764,35400,6640,0,N,N,N,CP_Drtn,TT_Task,DT_FixedDrtn,TK_NotStart,HHI.1092,Backgouge & NDT Inside Vertical Seam,,0,0,10,0,101.333333,101.333333,10,33.066667,0,33.066667,,,,2014-04-26 07:00,2014-04-26 17:00,,2014-04-26 07:00,2014-04-26 17:00,2014-04-26 07:00,2014-04-26 17:00,2014-04-26 07:00,2014-04-26 17:00,2014-04-26 07:00,2014-04-26 17:00,,PT_Normal,,,,,ejNsZ3CVS/etkXrUzS7v8Q,BNHOB1GTR4KpOEBPPqDY1A,,,Y,0,0,,,2014-02-17 15:27,2014-03-01 14:49,admin,admin,
630,128273,6764,35400,6640,0,N,N,N,CP_Drtn,TT_Task,DT_FixedDrtn,TK_NotStart,HHI.1093,Weld Inside Vertical Seam,,0,0,10,0,202.666668,202.666668,10,85.333333,0,85.333333,,,,2014-04-27 07:00,2014-04-27 17:00,,2014-04-27 07:00,2014-04-27 17:00,2014-04-27 07:00,2014-04-27 17:00,2014-04-27 07:00,2014-04-27 17:00,2014-04-27 07:00,2014-04-27 17:00,,PT_Normal,,,,,n5DBLP0fRu+2evmQ+vVk7A,5JxXiDGsQa6yk8qLwKU4nw,,,Y,0,0,,,2014-02-17 15:27,2014-03-01 14:49,admin,admin,
631,128274,6764,35400,6640,0,N,N,N,CP_Drtn,TT_Task,DT_FixedDrtn,TK_NotStart,HHI.1094,"Weld Outer Horizontal Seam between Shell Course # 3 & 4""""",,0,0,20,0,405.333332,405.333332,20,128,0,128,,,,2014-04-28 07:00,2014-04-29 17:00,,2014-04-28 07:00,2014-04-29 17:00,2014-04-28 07:00,2014-04-29 17:00,2014-04-28 07:00,2014-04-29 17:00,2014-04-28 07:00,2014-04-29 17:00,,PT_Normal,,,,,VoZqCZkJSzWEnFlkd+WbBg,BCDNliZHQF6A7+iVQXkgWg,,,Y,0,0,,,2014-02-17 15:27,2014-03-01 14:49,admin,admin,
632,128275,6764,35400,6640,0,N,N,N,CP_Drtn,TT_Task,DT_FixedDrtn,TK_NotStart,HHI.1095,"Backgouge & NDT Inside Horizontal Seam between Shell Course# 3 & 4""""",,0,0,10,0,94.222222,94.222222,10,33.066667,0,33.066667,,,,2014-04-30 07:00,2014-04-30 17:00,,2014-04-30 07:00,2014-04-30 17:00,2014-04-30 07:00,2014-04-30 17:00,2014-04-30 07:00,2014-04-30 17:00,2014-04-30 07:00,2014-04-30 17:00,,PT_Normal,,,,,rpU4YhOEQReyjwouvqw4+Q,S8FE3RwDSFSDbXL7V2JXwg,,,Y,0,0,,,2014-02-17 15:27,2014-03-01 14:49,admin,admin,
633,128276,6764,35400,6640,0,N,N,N,CP_Drtn,TT_Task,DT_FixedDrtn,TK_NotStart,HHI.1096,"Weld Inner Horizontal Seam between Shell Course # 3 & 4""""/Fit,Weld Nozzle on Shell",,0,0,10,0,405.333332,405.333332,10,128,0,128,,,,2014-05-01 07:00,2014-05-01 17:00,,2014-05-01 07:00,2014-05-01 17:00,2014-05-01 07:00,2014-05-01 17:00,2014-05-01 07:00,2014-05-01 17:00,2014-05-01 07:00,2014-05-01 17:00,,PT_Normal,,,,,tOIhKy4wR7SmXPod1UwXTg,jTDik1RCQW2qvwxG4+hFLg,,,Y,0,0,,,2014-02-17 15:27,2014-03-01 14:49,admin,admin,
634,128277,6764,35400,6640,0,N,N,N,CP_Drtn,TT_Task,DT_FixedDrtn,TK_NotStart,HHI.1097,"Quailty Check(Visual Inspection,PT,Air Leak Test for Shell Nozzle))",,0,0,80,0,48.444444,48.444444,80,33.066667,0,33.066667,,,,2014-04-23 07:00,2014-05-01 17:00,,2014-04-23 07:00,2014-05-01 17:00,2014-04-23 07:00,2014-05-01 17:00,2014-04-23 07:00,2014-05-01 17:00,2014-04-23 07:00,2014-05-01 17:00,,PT_Normal,,,,,ySjrZ1WdTgW8+346Fberzg,vxiwwbxFSD6COwBXvbL9ug,,,Y,0,0,,,2014-02-17 15:27,2014-03-01 14:49,admin,admin,
635,128278,6764,35401,6640,0,N,N,N,CP_Drtn,TT_Task,DT_FixedDrtn,TK_NotStart,HHI.1098,Perform RT for Tank#1 & #2,,0,0,10,0,0,0,10,0,0,0,,,,2014-05-03 07:00,2014-05-03 17:00,,2014-05-03 07:00,2014-05-03 17:00,2014-05-03 07:00,2014-05-03 17:00,2014-05-03 07:00,2014-05-03 17:00,2014-05-03 07:00,2014-05-03 17:00,,PT_Normal,,,,,bvuTC7dSQaeHUh34KUOc9A,/6cai9VLTE2sY94MF15f8w,,,Y,0,0,,,2014-02-17 15:27,2014-03-01 14:49,admin,admin,
636,128279,6764,35403,6640,0,N,N,N,CP_Drtn,TT_Task,DT_FixedDrtn,TK_NotStart,HHI.1117,Erect & Tack Columns,,10,10,20,0,1680,1680,20,48,0,48,,,,2014-05-14 07:00,2014-05-15 17:00,,2014-05-13 07:00,2014-05-14 17:00,2014-05-13 07:00,2014-05-14 17:00,2014-05-13 07:00,2014-05-14 17:00,2014-05-14 07:00,2014-05-15 17:00,,PT_Normal,,,,,c+IOXf67TPunsVTtaTYcyA,V5K6TGHaTUGcH/Nc5PzjGg,,,N,0,0,,,2014-02-17 15:27,2014-03-01 14:49,admin,admin,
637,128280,6764,35404,6640,0,N,N,N,CP_Drtn,TT_Task,DT_FixedDrtn,TK_NotStart,HHI.1116,Erect & Tack Columns,,0,0,20,0,1680,1680,20,48,0,48,,,,2014-05-11 07:00,2014-05-12 17:00,,2014-05-11 07:00,2014-05-12 17:00,2014-05-11 07:00,2014-05-12 17:00,2014-05-11 07:00,2014-05-12 17:00,2014-05-11 07:00,2014-05-12 17:00,,PT_Normal,,,,,9e1t7BLITDyk45iyYDae+g,bH5O94ZkSU6A3mxzxhlpew,,,Y,0,0,,,2014-02-17 15:27,2014-03-01 14:49,admin,admin,
638,128281,6764,35406,6640,0,N,N,N,CP_Drtn,TT_Task,DT_FixedDrtn,TK_NotStart,HHI.1004,"Install Sealent,Erect & Tack of Annular Plates",,0,0,10,0,80,80,10,8,0,8,,,,2014-02-18 07:00,2014-02-18 17:00,,2014-02-18 07:00,2014-02-18 17:00,2014-02-18 07:00,2014-02-18 17:00,2014-02-18 07:00,2014-02-18 17:00,2014-02-18 07:00,2014-02-18 17:00,,PT_Normal,,,,,sxbI6H2nQtyCW0QyPgDHCg,097QdWX0SSCLEWFVz2DdGA,,,Y,0,0,,,2014-02-17 15:27,2014-03-01 14:49,admin,admin,
639,128282,6764,35406,6640,0,N,N,N,CP_Drtn,TT_Task,DT_FixedDrtn,TK_NotStart,HHI.1005,Welding of Annular Plates,,0,0,10,0,180,180,10,40,0,40,,,,2014-02-19 07:00,2014-02-19 17:00,,2014-02-19 07:00,2014-02-19 17:00,2014-02-19 07:00,2014-02-19 17:00,2014-02-19 07:00,2014-02-19 17:00,2014-02-19 07:00,2014-02-19 17:00,,PT_Normal,,,,,wVsXGn4hQp+uOz34+nHj6g,oHh7lCJTS+iUEFSmdP+I4Q,,,Y,0,0,,,2014-02-17 15:27,2014-03-01 14:49,admin,admin,
640,128283,6764,35406,6640,0,N,N,N,CP_Drtn,TT_Task,DT_FixedDrtn,TK_NotStart,HHI.1006,"Quailty Check (Visual Inspection,PT & Vaccum Box Test)",,0,0,20,0,40,40,20,40,0,40,,,,2014-02-18 07:00,2014-02-19 17:00,,2014-02-18 07:00,2014-02-19 17:00,2014-02-18 07:00,2014-02-19 17:00,2014-02-18 07:00,2014-02-19 17:00,2014-02-18 07:00,2014-02-19 17:00,,PT_Normal,,,,,1IdakwKgTKa8CI/09z+L+A,Cj0h9st1Que0naEhGC31Bg,,,Y,0,0,,,2014-02-17 15:27,2014-03-01 14:49,admin,admin,
641,128284,6764,35407,6640,0,N,N,N,CP_Drtn,TT_Task,DT_FixedDrtn,TK_NotStart,HHI.1007,Prepare & Lay Down Bottom Plates,,0,0,20,0,347.999998,347.999998,20,25.6,0,25.6,,,,2014-02-20 07:00,2014-02-22 17:00,,2014-02-20 07:00,2014-02-22 17:00,2014-02-20 07:00,2014-02-22 17:00,2014-02-20 07:00,2014-02-22 17:00,2014-02-20 07:00,2014-02-22 17:00,,PT_Normal,,,,,oXodotFTQ26kGGYIkEkkfw,cSuqDDb+QJmAnEmAz7DsJA,,,Y,0,0,,,2014-02-17 15:27,2014-03-01 14:49,admin,admin,
642,128285,6764,35407,6640,0,N,N,N,CP_Drtn,TT_Task,DT_FixedDrtn,TK_NotStart,HHI.1009,Quailty Check (Visual Inspection& Vaccum Box Test),,0,0,120,0,21.333334,21.333334,120,42.666666,0,42.666666,,,,2014-02-20 07:00,2014-03-05 17:00,,2014-02-20 07:00,2014-03-05 17:00,2014-02-20 07:00,2014-03-05 17:00,2014-02-20 07:00,2014-03-05 17:00,2014-02-20 07:00,2014-03-05 17:00,,PT_Normal,,,,,+PKRHScyTFy/RfrxRJxj5Q,XZOJUaRwRAK6ogOg9ogpWA,,,Y,0,0,,,2014-02-17 15:27,2014-03-01 14:49,admin,admin,
643,128286,6764,35407,6640,0,N,N,N,CP_Drtn,TT_Task,DT_FixedDrtn,TK_NotStart,HHI.1012,"Erect,Fitup of Sump",,30,30,10,0,51.999998,51.999998,10,42.666666,0,42.666666,,,,2014-03-04 07:00,2014-03-04 17:00,,2014-03-01 07:00,2014-03-01 17:00,2014-03-01 07:00,2014-03-01 17:00,2014-03-01 07:00,2014-03-01 17:00,2014-03-04 07:00,2014-03-04 17:00,,PT_Normal,,,,,HqRwYkH3Tx+GHQMPZH/r0g,azLvu2U/T7yLYVzFoh2CDg,,,N,0,0,,,2014-02-17 15:27,2014-03-01 14:49,admin,admin,
644,128287,6764,35407,6640,0,N,N,N,CP_Drtn,TT_Task,DT_FixedDrtn,TK_NotStart,HHI.1014,Weld Sump,,0,0,10,0,17.066666,17.066666,10,42.666666,0,42.666666,,,,2014-03-05 07:00,2014-03-05 17:00,,2014-03-05 07:00,2014-03-05 17:00,2014-03-05 07:00,2014-03-05 17:00,2014-03-05 07:00,2014-03-05 17:00,2014-03-05 07:00,2014-03-05 17:00,,PT_Normal,,,,,VZcbgFCBRLiZUji94K3E0A,SqxN3XVPRMGrmG0HRhHfKQ,,,Y,0,0,,,2014-02-17 15:27,2014-03-01 14:49,admin,admin,
645,128288,6764,35407,6640,0,N,N,N,CP_Drtn,TT_Task,DT_FixedDrtn,TK_NotStart,HHI.1008,Fit/Tack Bottom Plates-Short Seams,,0,0,20,0,0,0,20,0,0,0,,,,2014-02-24 07:00,2014-02-25 17:00,,2014-02-24 07:00,2014-02-25 17:00,2014-02-24 07:00,2014-02-25 17:00,2014-02-24 07:00,2014-02-25 17:00,2014-02-24 07:00,2014-02-25 17:00,,PT_Normal,,,,,L1/NPvmxRUC/Ux8HfVBxwQ,uhkdYaWUx0+umBsFw9lChQ,,,Y,0,0,,,2014-02-17 15:27,2014-03-01 14:49,admin,admin,
646,128289,6764,35407,6640,0,N,N,N,CP_Drtn,TT_Task,DT_FixedDrtn,TK_NotStart,HHI.1010,Weld Short Seams,,0,0,20,0,0,0,20,0,0,0,,,,2014-02-25 07:00,2014-02-26 17:00,,2014-02-25 07:00,2014-02-26 17:00,2014-02-25 07:00,2014-02-26 17:00,2014-02-25 07:00,2014-02-26 17:00,2014-02-25 07:00,2014-02-26 17:00,,PT_Normal,,,,,Va6VKdqwQQ+xaaSTzhd90g,+WnS43UkRUOt/DhBTcv3Hw,,,Y,0,0,,,2014-02-17 15:27,2014-03-01 14:49,admin,admin,
647,128290,6764,35407,6640,0,N,N,N,CP_Drtn,TT_Task,DT_FixedDrtn,TK_NotStart,HHI.1011,Fit/Tack Bottom Plates-Long Seams,,0,0,20,0,0,0,20,0,0,0,,,,2014-02-27 07:00,2014-03-01 17:00,,2014-02-27 07:00,2014-03-01 17:00,2014-02-27 07:00,2014-03-01 17:00,2014-02-27 07:00,2014-03-01 17:00,2014-02-27 07:00,2014-03-01 17:00,,PT_Normal,,,,,zqW6b2sjS7yF3C53CPMMNQ,YK2VI0eP302gnVkOZh9TDA,,,Y,0,0,,,2014-02-17 15:27,2014-03-01 14:49,admin,admin,
648,128291,6764,35407,6640,0,N,N,N,CP_Drtn,TT_Task,DT_FixedDrtn,TK_NotStart,HHI.1013,Weld Long Seams,,0,0,50,0,0,0,50,0,0,0,,,,2014-03-01 07:00,2014-03-05 17:00,,2014-03-01 07:00,2014-03-05 17:00,2014-03-01 07:00,2014-03-05 17:00,2014-03-01 07:00,2014-03-05 17:00,2014-03-01 07:00,2014-03-05 17:00,,PT_Normal,,,,,sUJNL9zcS1S8qVSu5K8n9A,AsgK1LnCDEKHVNCBxqz+EA,,,Y,0,0,,,2014-02-17 15:27,2014-03-01 14:49,admin,admin,
649,128292,6764,35409,6640,0,N,N,N,CP_Drtn,TT_Task,DT_FixedDrtn,TK_NotStart,HHI.1115,Perform RT for Tank#1 & #2,,0,0,10,0,0,0,10,0,0,0,,,,2014-05-13 07:00,2014-05-13 17:00,,2014-05-13 07:00,2014-05-13 17:00,2014-05-13 07:00,2014-05-13 17:00,2014-05-13 07:00,2014-05-13 17:00,2014-05-13 07:00,2014-05-13 17:00,,PT_Normal,,,,,7M0IfFMiRn+lwdd4aLxalA,57QxJzEdjEy1pDYy8+dWuQ,,,Y,0,0,,,2014-02-17 15:27,2014-03-01 14:49,admin,admin,
650,128293,6764,35410,6640,0,N,N,N,CP_Drtn,TT_Task,DT_FixedDrtn,TK_NotStart,HHI.1107,Erect & Tack Shell Course # 5 & Install Stagging Brackets,,0,0,10,0,440,440,10,48,0,48,,,,2014-05-05 07:00,2014-05-05 17:00,,2014-05-05 07:00,2014-05-05 17:00,2014-05-05 07:00,2014-05-05 17:00,2014-05-05 07:00,2014-05-05 17:00,2014-05-05 07:00,2014-05-05 17:00,,PT_Normal,,,,,FGEg8uHPR1WqZCZ44Vuz2Q,6q/BDSb3RNOgIVf4NN2WrA,,,Y,0,0,,,2014-02-17 15:27,2014-03-01 14:49,admin,admin,
651,128294,6764,35410,6640,0,N,N,N,CP_Drtn,TT_Task,DT_FixedDrtn,TK_NotStart,HHI.1108,Weld Outer Vertical Seam/Install the Stairways support on Shell,,0,0,10,0,160,160,10,33.066667,0,33.066667,,,,2014-05-06 07:00,2014-05-06 17:00,,2014-05-06 07:00,2014-05-06 17:00,2014-05-06 07:00,2014-05-06 17:00,2014-05-06 07:00,2014-05-06 17:00,2014-05-06 07:00,2014-05-06 17:00,,PT_Normal,,,,,RM2kLJ2UTM29GCCYA5ltGQ,rCgPssAPSnGhPoHBW3hJiw,,,Y,0,0,,,2014-02-17 15:27,2014-03-01 14:49,admin,admin,
652,128295,6764,35410,6640,0,N,N,N,CP_Drtn,TT_Task,DT_FixedDrtn,TK_NotStart,HHI.1109,Backgouge & NDT Inside Vertical Seam,,0,0,10,0,80,80,10,42.666666,0,42.666666,,,,2014-05-07 07:00,2014-05-07 17:00,,2014-05-07 07:00,2014-05-07 17:00,2014-05-07 07:00,2014-05-07 17:00,2014-05-07 07:00,2014-05-07 17:00,2014-05-07 07:00,2014-05-07 17:00,,PT_Normal,,,,,fzjTkBFzSD+TupZe0tvfkA,k1VmmGRURk+9Zdzru2ceCA,,,Y,0,0,,,2014-02-17 15:27,2014-03-01 14:49,admin,admin,
653,128296,6764,35410,6640,0,N,N,N,CP_Drtn,TT_Task,DT_FixedDrtn,TK_NotStart,HHI.1110,Weld Inside Vertical Seam,,0,0,10,0,167.111111,167.111111,10,33.066667,0,33.066667,,,,2014-05-08 07:00,2014-05-08 17:00,,2014-05-08 07:00,2014-05-08 17:00,2014-05-08 07:00,2014-05-08 17:00,2014-05-08 07:00,2014-05-08 17:00,2014-05-08 07:00,2014-05-08 17:00,,PT_Normal,,,,,7MVXhdPCREuI4UTHQ04dyA,FmgYjGY7Rfqs9NoV40XANw,,,Y,0,0,,,2014-02-17 15:27,2014-03-01 14:49,admin,admin,
654,128297,6764,35410,6640,0,N,N,N,CP_Drtn,TT_Task,DT_FixedDrtn,TK_NotStart,HHI.1111,"""""Weld Outer Horizontal Seam between Shell Course # 4 & 5""""",,0,0,10,0,341.333334,341.333334,10,85.333334,0,85.333334,,,,2014-05-10 07:00,2014-05-10 17:00,,2014-05-10 07:00,2014-05-10 17:00,2014-05-10 07:00,2014-05-10 17:00,2014-05-10 07:00,2014-05-10 17:00,2014-05-10 07:00,2014-05-10 17:00,,PT_Normal,,,,,aMhs/elDQ9WJsXP+qAlQjw,P7ZeSVVQTAO2LWUhoM0TqA,,,Y,0,0,,,2014-02-17 15:27,2014-03-01 14:49,admin,admin,
655,128298,6764,35410,6640,0,N,N,N,CP_Drtn,TT_Task,DT_FixedDrtn,TK_NotStart,HHI.1112,"""""Backgouge & NDT Inside Horizontal Seam between Shell Course# 4 & 5""""",,0,0,10,0,108.444444,108.444444,10,33.066667,0,33.066667,,,,2014-05-11 07:00,2014-05-11 17:00,,2014-05-11 07:00,2014-05-11 17:00,2014-05-11 07:00,2014-05-11 17:00,2014-05-11 07:00,2014-05-11 17:00,2014-05-11 07:00,2014-05-11 17:00,,PT_Normal,,,,,TA5pVBxxSyWvdoaTs0QkDA,lvHZpmfBQ3uOVQUTZ7DSHQ,,,Y,0,0,,,2014-02-17 15:27,2014-03-01 14:49,admin,admin,
656,128299,6764,35410,6640,0,N,N,N,CP_Drtn,TT_Task,DT_FixedDrtn,TK_NotStart,HHI.1113,"Weld Inner Horizontal Seam between Shell Course #4 & 5""""",,0,0,10,0,405.333336,405.333336,10,85.333333,0,85.333333,,,,2014-05-12 07:00,2014-05-12 17:00,,2014-05-12 07:00,2014-05-12 17:00,2014-05-12 07:00,2014-05-12 17:00,2014-05-12 07:00,2014-05-12 17:00,2014-05-12 07:00,2014-05-12 17:00,,PT_Normal,,,,,Sj+w8YMhQU6Ii6Ei/rO2Uw,xPOXDYHdQvOC00W7kDCTMg,,,Y,0,0,,,2014-02-17 15:27,2014-03-01 14:49,admin,admin,
657,128300,6764,35410,6640,0,N,N,N,CP_Drtn,TT_Task,DT_FixedDrtn,TK_NotStart,HHI.1114,Quailty Check(Visual Inspection),,0,0,70,0,55.555555,55.555555,70,33.066667,0,33.066667,,,,2014-05-05 07:00,2014-05-12 17:00,,2014-05-05 07:00,2014-05-12 17:00,2014-05-05 07:00,2014-05-12 17:00,2014-05-05 07:00,2014-05-12 17:00,2014-05-05 07:00,2014-05-12 17:00,,PT_Normal,,,,,SahXc1aiRRSmxDIy+r5U4Q,UR/t2yvfTkCyuXQg//ZP2g,,,Y,0,0,,,2014-02-17 15:27,2014-03-01 14:49,admin,admin,
658,128301,6764,35411,6640,0,N,N,N,CP_Drtn,TT_Task,DT_FixedDrtn,TK_NotStart,HHI.1099,Erect & Tack Shell Course # 5 & Install Stagging Brackets,,0,0,10,0,380,380,10,48,0,48,,,,2014-05-03 07:00,2014-05-03 17:00,,2014-05-03 07:00,2014-05-03 17:00,2014-05-03 07:00,2014-05-03 17:00,2014-05-03 07:00,2014-05-03 17:00,2014-05-03 07:00,2014-05-03 17:00,,PT_Normal,,,,,ydNiuEHSS+2ge8erL7EOZQ,AmSfcp/1R7W22HR0+8ewXg,,,Y,0,0,,,2014-02-17 15:27,2014-03-01 14:49,admin,admin,
659,128302,6764,35411,6640,0,N,N,N,CP_Drtn,TT_Task,DT_FixedDrtn,TK_NotStart,HHI.1100,Weld Outer Vertical Seam/Install the Stairways support on Shell,,0,0,10,0,167.111111,167.111111,10,33.066667,0,33.066667,,,,2014-05-04 07:00,2014-05-04 17:00,,2014-05-04 07:00,2014-05-04 17:00,2014-05-04 07:00,2014-05-04 17:00,2014-05-04 07:00,2014-05-04 17:00,2014-05-04 07:00,2014-05-04 17:00,,PT_Normal,,,,,pqLXa9zZQ5KYU62CPv3rdQ,VyW7xQ1cQwaYAmEL0EzI/w,,,Y,0,0,,,2014-02-17 15:27,2014-03-01 14:49,admin,admin,
660,128303,6764,35411,6640,0,N,N,N,CP_Drtn,TT_Task,DT_FixedDrtn,TK_NotStart,HHI.1101,Backgouge & NDT Inside Vertical Seam,,0,0,10,0,90.666666,90.666666,10,42.666666,0,42.666666,,,,2014-05-05 07:00,2014-05-05 17:00,,2014-05-05 07:00,2014-05-05 17:00,2014-05-05 07:00,2014-05-05 17:00,2014-05-05 07:00,2014-05-05 17:00,2014-05-05 07:00,2014-05-05 17:00,,PT_Normal,,,,,yWCmBNOeQMqQP8sjNoCKEA,SRCHG8RyTMCxgVaJ9TD7+g,,,Y,0,0,,,2014-02-17 15:27,2014-03-01 14:49,admin,admin,
661,128304,6764,35411,6640,0,N,N,N,CP_Drtn,TT_Task,DT_FixedDrtn,TK_NotStart,HHI.1102,Weld Inside Vertical Seam,,0,0,10,0,160,160,10,33.066667,0,33.066667,,,,2014-05-06 07:00,2014-05-06 17:00,,2014-05-06 07:00,2014-05-06 17:00,2014-05-06 07:00,2014-05-06 17:00,2014-05-06 07:00,2014-05-06 17:00,2014-05-06 07:00,2014-05-06 17:00,,PT_Normal,,,,,sbTjgoPfRH+U8jhnaGON+w,XVsddY+1S1ekh/guXtMoFw,,,Y,0,0,,,2014-02-17 15:27,2014-03-01 14:49,admin,admin,
662,128305,6764,35411,6640,0,N,N,N,CP_Drtn,TT_Task,DT_FixedDrtn,TK_NotStart,HHI.1103,"""""Weld Outer Horizontal Seam between Shell Course # 4 & 5""""",,0,0,10,0,320,320,10,85.333334,0,85.333334,,,,2014-05-07 07:00,2014-05-07 17:00,,2014-05-07 07:00,2014-05-07 17:00,2014-05-07 07:00,2014-05-07 17:00,2014-05-07 07:00,2014-05-07 17:00,2014-05-07 07:00,2014-05-07 17:00,,PT_Normal,,,,,W+jIH9LpRk2X0CKKI0DNZw,e166thn5TSap50IwUIyG/w,,,Y,0,0,,,2014-02-17 15:27,2014-03-01 14:49,admin,admin,
663,128306,6764,35411,6640,0,N,N,N,CP_Drtn,TT_Task,DT_FixedDrtn,TK_NotStart,HHI.1104,"""""Backgouge & NDT Inside Horizontal Seam between Shell Course# 4 & 5""""",,0,0,10,0,80,80,10,33.066667,0,33.066667,,,,2014-05-08 07:00,2014-05-08 17:00,,2014-05-08 07:00,2014-05-08 17:00,2014-05-08 07:00,2014-05-08 17:00,2014-05-08 07:00,2014-05-08 17:00,2014-05-08 07:00,2014-05-08 17:00,,PT_Normal,,,,,Lc6+mvewTyGI7CBcPL06mA,oUkWKMmWTHu3BaifcROXfA,,,Y,0,0,,,2014-02-17 15:27,2014-03-01 14:49,admin,admin,
664,128307,6764,35411,6640,0,N,N,N,CP_Drtn,TT_Task,DT_FixedDrtn,TK_NotStart,HHI.1105,"Weld Inner Horizontal Seam between Shell Course # 4 & 5""""",,0,0,10,0,405.333336,405.333336,10,85.333333,0,85.333333,,,,2014-05-10 07:00,2014-05-10 17:00,,2014-05-10 07:00,2014-05-10 17:00,2014-05-10 07:00,2014-05-10 17:00,2014-05-10 07:00,2014-05-10 17:00,2014-05-10 07:00,2014-05-10 17:00,,PT_Normal,,,,,svXNjUKoSU20vWZKRbem7w,IU10EaLcT0WnsT9eLdmIJw,,,Y,0,0,,,2014-02-17 15:27,2014-03-01 14:49,admin,admin,
665,128308,6764,35411,6640,0,N,N,N,CP_Drtn,TT_Task,DT_FixedDrtn,TK_NotStart,HHI.1106,Quailty Check(Visual Inspection),,0,0,70,0,27.111111,27.111111,70,33.066667,0,33.066667,,,,2014-05-03 07:00,2014-05-10 17:00,,2014-05-03 07:00,2014-05-10 17:00,2014-05-03 07:00,2014-05-10 17:00,2014-05-03 07:00,2014-05-10 17:00,2014-05-03 07:00,2014-05-10 17:00,,PT_Normal,,,,,P4QtJSSzRU6PwpAEqKR4Rg,mtVZY7oYSfS52SKp31itYQ,,,Y,0,0,,,2014-02-17 15:27,2014-03-01 14:49,admin,admin,
666,128309,6764,35413,6640,0,N,N,N,CP_Drtn,TT_Task,DT_FixedDrtn,TK_NotStart,HHI.1118,Erect & Tack Shell Course # 6 & Instal Stagging Brackets,,0,0,10,0,400,400,10,48,0,48,,,,2014-05-13 07:00,2014-05-13 17:00,,2014-05-13 07:00,2014-05-13 17:00,2014-05-13 07:00,2014-05-13 17:00,2014-05-13 07:00,2014-05-13 17:00,2014-05-13 07:00,2014-05-13 17:00,,PT_Normal,,,,,XBKtTYWXS5yzSY1m54vQAg,Rru+Dd7VT0qeCiB34lVInA,,,Y,0,0,,,2014-02-17 15:27,2014-03-01 14:49,admin,admin,
667,128310,6764,35413,6640,0,N,N,N,CP_Drtn,TT_Task,DT_FixedDrtn,TK_NotStart,HHI.1120,Backgouge & NDT Inside Vertical Seam,,0,0,10,0,101.333332,101.333332,10,42.666666,0,42.666666,,,,2014-05-15 07:00,2014-05-15 17:00,,2014-05-15 07:00,2014-05-15 17:00,2014-05-15 07:00,2014-05-15 17:00,2014-05-15 07:00,2014-05-15 17:00,2014-05-15 07:00,2014-05-15 17:00,,PT_Normal,,,,,GalbgYWlRCysUlvXMwdx/w,OeuTFJYsS9eol/Apll62rw,,,Y,0,0,,,2014-02-17 15:27,2014-03-01 14:49,admin,admin,
668,128311,6764,35413,6640,0,N,N,N,CP_Drtn,TT_Task,DT_FixedDrtn,TK_NotStart,HHI.1121,Weld Inside Vertical Seam,,0,0,10,0,191.999998,191.999998,10,42.666666,0,42.666666,,,,2014-05-17 07:00,2014-05-17 17:00,,2014-05-17 07:00,2014-05-17 17:00,2014-05-17 07:00,2014-05-17 17:00,2014-05-17 07:00,2014-05-17 17:00,2014-05-17 07:00,2014-05-17 17:00,,PT_Normal,,,,,FXHK74+xSBaVYaKefc3xuw,jjTG1F4jRcyEXxcit6UyMg,,,Y,0,0,,,2014-02-17 15:27,2014-03-01 14:49,admin,admin,
669,128312,6764,35413,6640,0,N,N,N,CP_Drtn,TT_Task,DT_FixedDrtn,TK_NotStart,HHI.1119,Weld Outer Vertical Seam/Install the Stairways support on Shell,,0,0,10,0,181.333332,181.333332,10,42.666666,0,42.666666,,,,2014-05-14 07:00,2014-05-14 17:00,,2014-05-14 07:00,2014-05-14 17:00,2014-05-14 07:00,2014-05-14 17:00,2014-05-14 07:00,2014-05-14 17:00,2014-05-14 07:00,2014-05-14 17:00,,PT_Normal,,,,,rG/2jjwiSpO1MvqDJ4TWhQ,J9P3fls6RmGPPLHpA71gKQ,,,Y,0,0,,,2014-02-17 15:27,2014-03-01 14:49,admin,admin,
670,128313,6764,35413,6640,0,N,N,N,CP_Drtn,TT_Task,DT_FixedDrtn,TK_NotStart,HHI.1122,"""""Weld Outer Horizontal Seam between Shell Course # 5 & 6""""",,0,0,10,0,405.333336,405.333336,10,85.333333,0,85.333333,,,,2014-05-18 07:00,2014-05-18 17:00,,2014-05-18 07:00,2014-05-18 17:00,2014-05-18 07:00,2014-05-18 17:00,2014-05-18 07:00,2014-05-18 17:00,2014-05-18 07:00,2014-05-18 17:00,,PT_Normal,,,,,bHBNspbfQQC8dXkPTkVRuw,puELpSj6QT+5EDDOsEKXeg,,,Y,0,0,,,2014-02-17 15:27,2014-03-01 14:49,admin,admin,
671,128314,6764,35413,6640,0,N,N,N,CP_Drtn,TT_Task,DT_FixedDrtn,TK_NotStart,HHI.1123,"""""Backgouge & NDT Inside Horizontal Seam between Shell Course# 5 & 6""""",,0,0,10,0,108.444444,108.444444,10,33.066667,0,33.066667,,,,2014-05-19 07:00,2014-05-19 17:00,,2014-05-19 07:00,2014-05-19 17:00,2014-05-19 07:00,2014-05-19 17:00,2014-05-19 07:00,2014-05-19 17:00,2014-05-19 07:00,2014-05-19 17:00,,PT_Normal,,,,,F8MtQcNOQoS/K0Yyk5bTcQ,sNY9klwEQJCtZ/AMu5yBbw,,,Y,0,0,,,2014-02-17 15:27,2014-03-01 14:49,admin,admin,
672,128315,6764,35413,6640,0,N,N,N,CP_Drtn,TT_Task,DT_FixedDrtn,TK_NotStart,HHI.1124,"Weld Inner Horizontal Seam between Shell Course # 5 & 6""""/Fit,Weld Nozzle on Shell",,0,0,10,0,202.666668,202.666668,10,85.333333,0,85.333333,,,,2014-05-20 07:00,2014-05-20 17:00,,2014-05-20 07:00,2014-05-20 17:00,2014-05-20 07:00,2014-05-20 17:00,2014-05-20 07:00,2014-05-20 17:00,2014-05-20 07:00,2014-05-20 17:00,,PT_Normal,,,,,qroRxBEDTPqPEiLrALj6dw,YNkjerp/Scqb8tlwbXvxGg,,,Y,0,0,,,2014-02-17 15:27,2014-03-01 14:49,admin,admin,
673,128316,6764,35413,6640,0,N,N,N,CP_Drtn,TT_Task,DT_FixedDrtn,TK_NotStart,HHI.1125,"Quailty Check(Visual Inspection,PT,Air Leak Test for Shell Nozzle))",,0,0,60,0,34.222222,34.222222,60,33.066667,0,33.066667,,,,2014-05-14 07:00,2014-05-20 17:00,,2014-05-14 07:00,2014-05-20 17:00,2014-05-14 07:00,2014-05-20 17:00,2014-05-14 07:00,2014-05-20 17:00,2014-05-14 07:00,2014-05-20 17:00,,PT_Normal,,,,,KEWLz3ZPRxG/Nk4FzSOUBw,5IGDf4IhQPCFRHUnmtEXvA,,,Y,0,0,,,2014-02-17 15:27,2014-03-01 14:49,admin,admin,
674,128317,6764,35414,6640,0,N,N,N,CP_Drtn,TT_Task,DT_FixedDrtn,TK_NotStart,HHI.1126,Erect & Tack Shell Course # 6 & Install Stagging Brackets,,0,0,10,0,380,380,10,48,0,48,,,,2014-05-17 07:00,2014-05-17 17:00,,2014-05-17 07:00,2014-05-17 17:00,2014-05-17 07:00,2014-05-17 17:00,2014-05-17 07:00,2014-05-17 17:00,2014-05-17 07:00,2014-05-17 17:00,,PT_Normal,,,,,9nrGsY7URUGFzEj6iMB6tg,M4gPgKv2TmuKG1SdiZR5iQ,,,Y,0,0,,,2014-02-17 15:27,2014-03-01 14:49,admin,admin,
675,128318,6764,35414,6640,0,N,N,N,CP_Drtn,TT_Task,DT_FixedDrtn,TK_NotStart,HHI.1127,Weld Outer Vertical Seam/Install the Stairways support on Shell,,0,0,10,0,160,160,10,42.666666,0,42.666666,,,,2014-05-18 07:00,2014-05-18 17:00,,2014-05-18 07:00,2014-05-18 17:00,2014-05-18 07:00,2014-05-18 17:00,2014-05-18 07:00,2014-05-18 17:00,2014-05-18 07:00,2014-05-18 17:00,,PT_Normal,,,,,GPsqNs/RQkazxJEweDgBpg,PpijNh2hR0qn4pgEmulr4g,,,Y,0,0,,,2014-02-17 15:27,2014-03-01 14:49,admin,admin,
676,128319,6764,35414,6640,0,N,N,N,CP_Drtn,TT_Task,DT_FixedDrtn,TK_NotStart,HHI.1128,Backgouge & NDT Inside Vertical Seam,,0,0,10,0,101.333332,101.333332,10,42.666666,0,42.666666,,,,2014-05-19 07:00,2014-05-19 17:00,,2014-05-19 07:00,2014-05-19 17:00,2014-05-19 07:00,2014-05-19 17:00,2014-05-19 07:00,2014-05-19 17:00,2014-05-19 07:00,2014-05-19 17:00,,PT_Normal,,,,,ah0ai5RRSSWvbdH0cbBM5w,fGOqpSzqRCu4MwwdmL0OQA,,,Y,0,0,,,2014-02-17 15:27,2014-03-01 14:49,admin,admin,
677,128320,6764,35414,6640,0,N,N,N,CP_Drtn,TT_Task,DT_FixedDrtn,TK_NotStart,HHI.1129,Weld Inside Vertical Seam,,0,0,10,0,160,160,10,42.666666,0,42.666666,,,,2014-05-20 07:00,2014-05-20 17:00,,2014-05-20 07:00,2014-05-20 17:00,2014-05-20 07:00,2014-05-20 17:00,2014-05-20 07:00,2014-05-20 17:00,2014-05-20 07:00,2014-05-20 17:00,,PT_Normal,,,,,fyONA2itQQ6k/zKOkKVPzw,+5ImVA2/SvOKolXT9NUobg,,,Y,0,0,,,2014-02-17 15:27,2014-03-01 14:49,admin,admin,
678,128321,6764,35414,6640,0,N,N,N,CP_Drtn,TT_Task,DT_FixedDrtn,TK_NotStart,HHI.1130,"""""Weld Outer Horizontal Seam between Shell Course # 5 & 6""""",,0,0,10,0,405.333336,405.333336,10,85.333333,0,85.333333,,,,2014-05-21 07:00,2014-05-21 17:00,,2014-05-21 07:00,2014-05-21 17:00,2014-05-21 07:00,2014-05-21 17:00,2014-05-21 07:00,2014-05-21 17:00,2014-05-21 07:00,2014-05-21 17:00,,PT_Normal,,,,,q6IBDigVT1CgyxfMr80U0A,n9/GuaP7TcmNG//HqgzKDg,,,Y,0,0,,,2014-02-17 15:27,2014-03-01 14:49,admin,admin,
679,128322,6764,35414,6640,0,N,N,N,CP_Drtn,TT_Task,DT_FixedDrtn,TK_NotStart,HHI.1131,"""""Backgouge & NDT Inside Horizontal Seam between Shell Course# 5 & 6""""",,0,0,10,0,108.444444,108.444444,10,33.066667,0,33.066667,,,,2014-05-22 07:00,2014-05-22 17:00,,2014-05-22 07:00,2014-05-22 17:00,2014-05-22 07:00,2014-05-22 17:00,2014-05-22 07:00,2014-05-22 17:00,2014-05-22 07:00,2014-05-22 17:00,,PT_Normal,,,,,2tzxMKGbTIu1hKdtj3Qt6Q,fSszkJM1TQSrbK0ffgbXYQ,,,Y,0,0,,,2014-02-17 15:27,2014-03-01 14:49,admin,admin,
680,128323,6764,35414,6640,0,N,N,N,CP_Drtn,TT_Task,DT_FixedDrtn,TK_NotStart,HHI.1132,"Weld Inner Horizontal Seam between Shell Course # 5 & 6""""/Fit,Weld Nozzle on Shell",,0,0,10,0,202.666668,202.666668,10,85.333333,0,85.333333,,,,2014-05-24 07:00,2014-05-24 17:00,,2014-05-24 07:00,2014-05-24 17:00,2014-05-24 07:00,2014-05-24 17:00,2014-05-24 07:00,2014-05-24 17:00,2014-05-24 07:00,2014-05-24 17:00,,PT_Normal,,,,,Q1G3dhf3TS2FfTd6pgPa7A,yYix0WONQCeZmL0tFa22ew,,,Y,0,0,,,2014-02-17 15:27,2014-03-01 14:49,admin,admin,
681,128324,6764,35414,6640,0,N,N,N,CP_Drtn,TT_Task,DT_FixedDrtn,TK_NotStart,HHI.1133,"Quailty Check(Visual Inspection,PT,Air Leak Test for Shell Nozzle))",,0,0,60,0,27.111111,27.111111,60,33.066667,0,33.066667,,,,2014-05-18 07:00,2014-05-24 17:00,,2014-05-18 07:00,2014-05-24 17:00,2014-05-18 07:00,2014-05-24 17:00,2014-05-18 07:00,2014-05-24 17:00,2014-05-18 07:00,2014-05-24 17:00,,PT_Normal,,,,,HcNno7HnTSaXmSCLV1IeHg,LrOYeMGSRq2MxjIX+5MA+Q,,,Y,0,0,,,2014-02-17 15:27,2014-03-01 14:49,admin,admin,
682,128325,6764,35415,6640,0,N,N,N,CP_Drtn,TT_Task,DT_FixedDrtn,TK_NotStart,HHI.1134,Perform RT for Tank#1 & #2,,0,0,10,0,0,0,10,0,0,0,,,,2014-05-25 07:00,2014-05-25 17:00,,2014-05-25 07:00,2014-05-25 17:00,2014-05-25 07:00,2014-05-25 17:00,2014-05-25 07:00,2014-05-25 17:00,2014-05-25 07:00,2014-05-25 17:00,,PT_Normal,,,,,sV7XdLOOSYS1hrElZPINWg,EqwopKted0GNF+1fvK/AJA,,,Y,0,0,,,2014-02-17 15:27,2014-03-01 14:49,admin,admin,
683,128326,6764,35417,6640,0,N,N,N,CP_Drtn,TT_Task,DT_FixedDrtn,TK_NotStart,HHI.1018,Prepare & Lay Down Bottom Plates,,0,0,20,0,347.999998,347.999998,20,25.6,0,25.6,,,,2014-02-27 07:00,2014-03-01 17:00,,2014-02-27 07:00,2014-03-01 17:00,2014-02-27 07:00,2014-03-01 17:00,2014-02-27 07:00,2014-03-01 17:00,2014-02-27 07:00,2014-03-01 17:00,,PT_Normal,,,,,1ecHTmO3TVGp4AHfp/iauw,i/dugnhYhkK96LPtdgptUg,,,Y,0,0,,,2014-02-17 15:27,2014-03-01 14:49,admin,admin,
684,128327,6764,35417,6640,0,N,N,N,CP_Drtn,TT_Task,DT_FixedDrtn,TK_NotStart,HHI.1021,Quailty Check (Visual Inspection& Vaccum Box Test),,0,0,120,0,21.333334,21.333334,120,42.666666,0,42.666666,,,,2014-02-27 07:00,2014-03-12 17:00,,2014-02-27 07:00,2014-03-12 17:00,2014-02-27 07:00,2014-03-12 17:00,2014-02-27 07:00,2014-03-12 17:00,2014-02-27 07:00,2014-03-12 17:00,,PT_Normal,,,,,HyUc4WpeSuWkzRUOyPQMrA,EOmVdZWxGU+xUW4BY7rzeA,,,Y,0,0,,,2014-02-17 15:27,2014-03-01 14:49,admin,admin,
685,128328,6764,35417,6640,0,N,N,N,CP_Drtn,TT_Task,DT_FixedDrtn,TK_NotStart,HHI.1024,"Erect,Fitup of Sump",,30,30,10,0,51.999998,51.999998,10,42.666666,0,42.666666,,,,2014-03-11 07:00,2014-03-11 17:00,,2014-03-08 07:00,2014-03-08 17:00,2014-03-08 07:00,2014-03-08 17:00,2014-03-08 07:00,2014-03-08 17:00,2014-03-11 07:00,2014-03-11 17:00,,PT_Normal,,,,,awvqEFoTTcGo8hxR1q3FdA,v32lHuSghEyNOO8GTnqK3A,,,N,0,0,,,2014-02-17 15:27,2014-03-01 14:49,admin,admin,
686,128329,6764,35417,6640,0,N,N,N,CP_Drtn,TT_Task,DT_FixedDrtn,TK_NotStart,HHI.1026,Weld Sump,,0,0,10,0,17.066666,17.066666,10,42.666666,0,42.666666,,,,2014-03-12 07:00,2014-03-12 17:00,,2014-03-12 07:00,2014-03-12 17:00,2014-03-12 07:00,2014-03-12 17:00,2014-03-12 07:00,2014-03-12 17:00,2014-03-12 07:00,2014-03-12 17:00,,PT_Normal,,,,,/Eo5CjmFQ4CYp43SBYJ9Fg,rwlw7Mi8y06BddCsGfowtw,,,Y,0,0,,,2014-02-17 15:27,2014-03-01 14:49,admin,admin,
687,128330,6764,35417,6640,0,N,N,N,CP_Drtn,TT_Task,DT_FixedDrtn,TK_NotStart,HHI.1020,Fit/Tack Bottom Plates-Short Seams,,0,0,20,0,0,0,20,0,0,0,,,,2014-03-03 07:00,2014-03-04 17:00,,2014-03-03 07:00,2014-03-04 17:00,2014-03-03 07:00,2014-03-04 17:00,2014-03-03 07:00,2014-03-04 17:00,2014-03-03 07:00,2014-03-04 17:00,,PT_Normal,,,,,fB7v5QkWS0e2lL7c+rSP2g,AqZyIuqTckCFo46iRimLLw,,,Y,0,0,,,2014-02-17 15:27,2014-03-01 14:49,admin,admin,
688,128331,6764,35417,6640,0,N,N,N,CP_Drtn,TT_Task,DT_FixedDrtn,TK_NotStart,HHI.1022,Weld Short Seams,,0,0,20,0,0,0,20,0,0,0,,,,2014-03-04 07:00,2014-03-05 17:00,,2014-03-04 07:00,2014-03-05 17:00,2014-03-04 07:00,2014-03-05 17:00,2014-03-04 07:00,2014-03-05 17:00,2014-03-04 07:00,2014-03-05 17:00,,PT_Normal,,,,,kS52a0HSTM+tT77Zt1FHRw,JnD0StBsYU6Wp5Ev9AaZ4Q,,,Y,0,0,,,2014-02-17 15:27,2014-03-01 14:49,admin,admin,
689,128332,6764,35417,6640,0,N,N,N,CP_Drtn,TT_Task,DT_FixedDrtn,TK_NotStart,HHI.1023,Fit/Tack Bottom Plates-Long Seams,,0,0,20,0,0,0,20,0,0,0,,,,2014-03-06 07:00,2014-03-08 17:00,,2014-03-06 07:00,2014-03-08 17:00,2014-03-06 07:00,2014-03-08 17:00,2014-03-06 07:00,2014-03-08 17:00,2014-03-06 07:00,2014-03-08 17:00,,PT_Normal,,,,,MWo4CKSMTQKhA+mBWTaoNA,Z6uoYstX8EubpzCpFQ7Shw,,,Y,0,0,,,2014-02-17 15:27,2014-03-01 14:49,admin,admin,
690,128333,6764,35417,6640,0,N,N,N,CP_Drtn,TT_Task,DT_FixedDrtn,TK_NotStart,HHI.1025,Weld Long Seams,,0,0,50,0,0,0,50,0,0,0,,,,2014-03-08 07:00,2014-03-12 17:00,,2014-03-08 07:00,2014-03-12 17:00,2014-03-08 07:00,2014-03-12 17:00,2014-03-08 07:00,2014-03-12 17:00,2014-03-08 07:00,2014-03-12 17:00,,PT_Normal,,,,,qqopn6P9RN+N3e4AKoh1Pg,u7zyNvZKH0ufVyncGgm2Bg,,,Y,0,0,,,2014-02-17 15:27,2014-03-01 14:49,admin,admin,
691,128334,6764,35418,6640,0,N,N,N,CP_Drtn,TT_Task,DT_FixedDrtn,TK_NotStart,HHI.1019,Perform RT for Tank#1 & #2,,0,0,10,0,0,0,10,0,0,0,,,,2014-02-27 07:00,2014-02-27 17:00,,2014-02-27 07:00,2014-02-27 17:00,2014-02-27 07:00,2014-02-27 17:00,2014-02-27 07:00,2014-02-27 17:00,2014-02-27 07:00,2014-02-27 17:00,,PT_Normal,,,,,yJxqi0KBRquyX9+/zSexkA,jHDIYLCM2Uu+vVJjZVQXMw,,,Y,0,0,,,2014-02-17 15:27,2014-03-01 14:49,admin,admin,
692,128335,6764,35419,6640,0,N,N,N,CP_Drtn,TT_Task,DT_FixedDrtn,TK_NotStart,HHI.1015,"Install Sealent,Erect & Tack of Annular Plates",,0,0,10,0,80,80,10,8,0,8,,,,2014-02-25 07:00,2014-02-25 17:00,,2014-02-25 07:00,2014-02-25 17:00,2014-02-25 07:00,2014-02-25 17:00,2014-02-25 07:00,2014-02-25 17:00,2014-02-25 07:00,2014-02-25 17:00,,PT_Normal,,,,,UiC4q/sEQA+Wqz0CwOH+Cg,7GsZ4FEFvEmDKSOoqSdWYw,,,Y,0,0,,,2014-02-17 15:27,2014-03-01 14:49,admin,admin,
693,128336,6764,35419,6640,0,N,N,N,CP_Drtn,TT_Task,DT_FixedDrtn,TK_NotStart,HHI.1017,Welding of Annular Plates,,0,0,10,0,180,180,10,40,0,40,,,,2014-02-26 07:00,2014-02-26 17:00,,2014-02-26 07:00,2014-02-26 17:00,2014-02-26 07:00,2014-02-26 17:00,2014-02-26 07:00,2014-02-26 17:00,2014-02-26 07:00,2014-02-26 17:00,,PT_Normal,,,,,jTwDzPT4QJS4V6VBmOENjA,2zSRmFzH9U2a6DBT0hJ+gw,,,Y,0,0,,,2014-02-17 15:27,2014-03-01 14:49,admin,admin,
694,128337,6764,35419,6640,0,N,N,N,CP_Drtn,TT_Task,DT_FixedDrtn,TK_NotStart,HHI.1016,"Quailty Check (Visual Inspection,PT & Vaccum Box Test)",,0,0,20,0,40,40,20,40,0,40,,,,2014-02-25 07:00,2014-02-26 17:00,,2014-02-25 07:00,2014-02-26 17:00,2014-02-25 07:00,2014-02-26 17:00,2014-02-25 07:00,2014-02-26 17:00,2014-02-25 07:00,2014-02-26 17:00,,PT_Normal,,,,,D4cn4yGKTWWB+HuoMHDdWw,VJDW85UQGEiHGqTTOrx/wg,,,Y,0,0,,,2014-02-17 15:27,2014-03-01 14:49,admin,admin,
695,128338,6764,35421,6640,0,N,N,N,CP_Drtn,TT_Task,DT_FixedDrtn,TK_NotStart,HHI.1158,Erect & Tack Shell Course # 7 & Install Stagging Brackets,,0,0,10,0,420,420,10,32,0,32,,,,2014-06-15 07:00,2014-06-15 17:00,,2014-06-15 07:00,2014-06-15 17:00,2014-06-15 07:00,2014-06-15 17:00,2014-06-15 07:00,2014-06-15 17:00,2014-06-15 07:00,2014-06-15 17:00,,PT_Normal,,,,,MAzxoLssT36MhR4Rhs82Lw,J/fdFs9MSiybliM/Vhv6eA,,,Y,0,0,,,2014-02-17 15:27,2014-03-01 14:49,admin,admin,
696,128339,6764,35421,6640,0,N,N,N,CP_Drtn,TT_Task,DT_FixedDrtn,TK_NotStart,HHI.1159,Weld Outer Vertical Seam /Install the Stairways support on Shell,,0,0,10,0,170.666666,170.666666,10,42.666666,0,42.666666,,,,2014-06-16 07:00,2014-06-16 17:00,,2014-06-16 07:00,2014-06-16 17:00,2014-06-16 07:00,2014-06-16 17:00,2014-06-16 07:00,2014-06-16 17:00,2014-06-16 07:00,2014-06-16 17:00,,PT_Normal,,,,,6TIcHltURwOq+Shgldj3RA,3niZBD9qT/OtZJshV3IlmA,,,Y,0,0,,,2014-02-17 15:27,2014-03-01 14:49,admin,admin,
697,128340,6764,35421,6640,0,N,N,N,CP_Drtn,TT_Task,DT_FixedDrtn,TK_NotStart,HHI.1160,Backgouge & NDT Inside Vertical Seam,,0,0,10,0,90.666666,90.666666,10,42.666666,0,42.666666,,,,2014-06-17 07:00,2014-06-17 17:00,,2014-06-17 07:00,2014-06-17 17:00,2014-06-17 07:00,2014-06-17 17:00,2014-06-17 07:00,2014-06-17 17:00,2014-06-17 07:00,2014-06-17 17:00,,PT_Normal,,,,,ScHrt7uOSC+tLMI8DqJziQ,Z4xoGc2oTiG7Zs5i97jxeQ,,,Y,0,0,,,2014-02-17 15:27,2014-03-01 14:49,admin,admin,
698,128341,6764,35421,6640,0,N,N,N,CP_Drtn,TT_Task,DT_FixedDrtn,TK_NotStart,HHI.1161,Weld Inside Vertical Seam,,0,0,10,0,170.666666,170.666666,10,42.666666,0,42.666666,,,,2014-06-18 07:00,2014-06-18 17:00,,2014-06-18 07:00,2014-06-18 17:00,2014-06-18 07:00,2014-06-18 17:00,2014-06-18 07:00,2014-06-18 17:00,2014-06-18 07:00,2014-06-18 17:00,,PT_Normal,,,,,P/FyX5qZRmye3HnC+a58CA,LlKP+YyaSbGXDiVdrW/T0w,,,Y,0,0,,,2014-02-17 15:27,2014-03-01 14:49,admin,admin,
699,128342,6764,35421,6640,0,N,N,N,CP_Drtn,TT_Task,DT_FixedDrtn,TK_NotStart,HHI.1162,"""""Weld Outer Horizontal Seam between Shell Course # 6 & 7""""",,0,0,10,0,167.111111,167.111111,10,33.066667,0,33.066667,,,,2014-06-19 07:00,2014-06-19 17:00,,2014-06-19 07:00,2014-06-19 17:00,2014-06-19 07:00,2014-06-19 17:00,2014-06-19 07:00,2014-06-19 17:00,2014-06-19 07:00,2014-06-19 17:00,,PT_Normal,,,,,iZmtobhxS5um0of3N3CF2w,9PGDv3edRP+A5aIAGG6Cxg,,,Y,0,0,,,2014-02-17 15:27,2014-03-01 14:49,admin,admin,
700,128343,6764,35421,6640,0,N,N,N,CP_Drtn,TT_Task,DT_FixedDrtn,TK_NotStart,HHI.1163,"""""Backgouge & NDT Inside Horizontal Seam between Shell Course# 6 & 7""""",,0,0,10,0,111.999998,111.999998,10,42.666667,0,42.666667,,,,2014-06-21 07:00,2014-06-21 17:00,,2014-06-21 07:00,2014-06-21 17:00,2014-06-21 07:00,2014-06-21 17:00,2014-06-21 07:00,2014-06-21 17:00,2014-06-21 07:00,2014-06-21 17:00,,PT_Normal,,,,,Us5hxOOzTkWksiXKhG2mYA,71VUCETLQ72FLy8SOlzo3Q,,,Y,0,0,,,2014-02-17 15:27,2014-03-01 14:49,admin,admin,
701,128344,6764,35421,6640,0,N,N,N,CP_Drtn,TT_Task,DT_FixedDrtn,TK_NotStart,HHI.1164,"Weld Inner Horizontal Seam between Shell Course # 6 & 7""""",,0,0,10,0,188.444444,188.444444,10,33.066667,0,33.066667,,,,2014-06-22 07:00,2014-06-22 17:00,,2014-06-22 07:00,2014-06-22 17:00,2014-06-22 07:00,2014-06-22 17:00,2014-06-22 07:00,2014-06-22 17:00,2014-06-22 07:00,2014-06-22 17:00,,PT_Normal,,,,,Z1rqilqkRo2X0+e37GzJvw,UnHBgqhXTgauap/pMvDXKQ,,,Y,0,0,,,2014-02-17 15:27,2014-03-01 14:49,admin,admin,
702,128345,6764,35421,6640,0,N,N,N,CP_Drtn,TT_Task,DT_FixedDrtn,TK_NotStart,HHI.1166,Quailty Check(Visual Inspection & PT& Air Leak Test for Shell Nozzle & Pad),,0,0,70,0,55.555555,55.555555,70,33.066667,0,33.066667,,,,2014-06-15 07:00,2014-06-22 17:00,,2014-06-15 07:00,2014-06-22 17:00,2014-06-15 07:00,2014-06-22 17:00,2014-06-15 07:00,2014-06-22 17:00,2014-06-15 07:00,2014-06-22 17:00,,PT_Normal,,,,,E6isSdZgR46JCN7BCu9itQ,pCa2ZG+bS0y1ecbkZvaaMA,,,Y,0,0,,,2014-02-17 15:27,2014-03-01 14:49,admin,admin,
703,128346,6764,35421,6640,0,N,N,N,CP_Drtn,TT_Task,DT_FixedDrtn,TK_NotStart,HHI.1165,"Fit,Weld Nozzle on Shell",,0,0,10,0,0,0,10,0,0,0,,,,2014-06-22 07:00,2014-06-22 17:00,,2014-06-22 07:00,2014-06-22 17:00,2014-06-22 07:00,2014-06-22 17:00,2014-06-22 07:00,2014-06-22 17:00,2014-06-22 07:00,2014-06-22 17:00,,PT_Normal,,,,,N/KMQYg2TYuz4u4cIqQXbw,ALZ7zRWNQ0yhPeGC6DgU0w,,,Y,0,0,,,2014-02-17 15:27,2014-03-01 14:49,admin,admin,
704,128347,6764,35422,6640,0,N,N,N,CP_Drtn,TT_Task,DT_FixedDrtn,TK_NotStart,HHI.1167,Erect & Tack Shell Course # 7 & Install Stagging Brackets,,0,0,10,0,400,400,10,48,0,48,,,,2014-06-17 07:00,2014-06-17 17:00,,2014-06-17 07:00,2014-06-17 17:00,2014-06-17 07:00,2014-06-17 17:00,2014-06-17 07:00,2014-06-17 17:00,2014-06-17 07:00,2014-06-17 17:00,,PT_Normal,,,,,auDg0q+oSAeoQB3Uow6iWw,59LuyzW4QOC2vZHliluiKg,,,Y,0,0,,,2014-02-17 15:27,2014-03-01 14:49,admin,admin,
705,128348,6764,35422,6640,0,N,N,N,CP_Drtn,TT_Task,DT_FixedDrtn,TK_NotStart,HHI.1168,Weld Outer Vertical Seam/Install the Stairways support on Shell,,0,0,10,0,160,160,10,42.666666,0,42.666666,,,,2014-06-18 07:00,2014-06-18 17:00,,2014-06-18 07:00,2014-06-18 17:00,2014-06-18 07:00,2014-06-18 17:00,2014-06-18 07:00,2014-06-18 17:00,2014-06-18 07:00,2014-06-18 17:00,,PT_Normal,,,,,Ar/J+2Q9SAusonlMnf3e9Q,jVT23/SpSeaE+g6hKwFFJg,,,Y,0,0,,,2014-02-17 15:27,2014-03-01 14:49,admin,admin,
706,128349,6764,35422,6640,0,N,N,N,CP_Drtn,TT_Task,DT_FixedDrtn,TK_NotStart,HHI.1169,Backgouge & NDT Inside Vertical Seam,,0,0,10,0,90.666666,90.666666,10,42.666666,0,42.666666,,,,2014-06-19 07:00,2014-06-19 17:00,,2014-06-19 07:00,2014-06-19 17:00,2014-06-19 07:00,2014-06-19 17:00,2014-06-19 07:00,2014-06-19 17:00,2014-06-19 07:00,2014-06-19 17:00,,PT_Normal,,,,,GO2hNdIRSg+eTgNrgvXJ0g,Vc/rrT4cQkmT4nB/veE9zQ,,,Y,0,0,,,2014-02-17 15:27,2014-03-01 14:49,admin,admin,
707,128350,6764,35422,6640,0,N,N,N,CP_Drtn,TT_Task,DT_FixedDrtn,TK_NotStart,HHI.1170,Weld Inside Vertical Seam,,0,0,10,0,160,160,10,42.666666,0,42.666666,,,,2014-06-21 07:00,2014-06-21 17:00,,2014-06-21 07:00,2014-06-21 17:00,2014-06-21 07:00,2014-06-21 17:00,2014-06-21 07:00,2014-06-21 17:00,2014-06-21 07:00,2014-06-21 17:00,,PT_Normal,,,,,B292P1fjSPm7SRZc13LLHw,AvyH6a0uREi2MHkX0pJD4g,,,Y,0,0,,,2014-02-17 15:27,2014-03-01 14:49,admin,admin,
708,128351,6764,35422,6640,0,N,N,N,CP_Drtn,TT_Task,DT_FixedDrtn,TK_NotStart,HHI.1171,"""""Weld Outer Horizontal Seam between Shell Course # 6 & 7""""",,0,0,10,0,160,160,10,33.066667,0,33.066667,,,,2014-06-22 07:00,2014-06-22 17:00,,2014-06-22 07:00,2014-06-22 17:00,2014-06-22 07:00,2014-06-22 17:00,2014-06-22 07:00,2014-06-22 17:00,2014-06-22 07:00,2014-06-22 17:00,,PT_Normal,,,,,19cbA766QUKPaC4d2qrrjQ,TRD5JqmNQTe45CvjSsgRag,,,Y,0,0,,,2014-02-17 15:27,2014-03-01 14:49,admin,admin,
709,128352,6764,35422,6640,0,N,N,N,CP_Drtn,TT_Task,DT_FixedDrtn,TK_NotStart,HHI.1172,"""""Backgouge & NDT Inside Horizontal Seam between Shell Course#6 & 7""""",,0,0,10,0,122.666664,122.666664,10,42.666667,0,42.666667,,,,2014-06-23 07:00,2014-06-23 17:00,,2014-06-23 07:00,2014-06-23 17:00,2014-06-23 07:00,2014-06-23 17:00,2014-06-23 07:00,2014-06-23 17:00,2014-06-23 07:00,2014-06-23 17:00,,PT_Normal,,,,,7sCeChmTSXOGu7XyfWbI8Q,vKesf0VnT7SkGvDx/lk03Q,,,Y,0,0,,,2014-02-17 15:27,2014-03-01 14:49,admin,admin,
710,128353,6764,35422,6640,0,N,N,N,CP_Drtn,TT_Task,DT_FixedDrtn,TK_NotStart,HHI.1173,"Weld Inner Horizontal Seam between Shell Course #6 & 7""""",,0,0,10,0,188.444444,188.444444,10,33.066667,0,33.066667,,,,2014-06-24 07:00,2014-06-24 17:00,,2014-06-24 07:00,2014-06-24 17:00,2014-06-24 07:00,2014-06-24 17:00,2014-06-24 07:00,2014-06-24 17:00,2014-06-24 07:00,2014-06-24 17:00,,PT_Normal,,,,,lqzeCnSsQyyNiN2rBlzE7Q,F8u11/2mTaKcUf/iueIBbw,,,Y,0,0,,,2014-02-17 15:27,2014-03-01 14:49,admin,admin,
711,128354,6764,35422,6640,0,N,N,N,CP_Drtn,TT_Task,DT_FixedDrtn,TK_NotStart,HHI.1175,Quailty Check(Visual Inspection & PT for Shell Nozzle & Pad),,0,0,70,0,55.555555,55.555555,70,33.066667,0,33.066667,,,,2014-06-17 07:00,2014-06-24 17:00,,2014-06-17 07:00,2014-06-24 17:00,2014-06-17 07:00,2014-06-24 17:00,2014-06-17 07:00,2014-06-24 17:00,2014-06-17 07:00,2014-06-24 17:00,,PT_Normal,,,,,HvbjmLZtTgyTlTi2YAWgBw,LQVKUEi9QYeqFiR3yMNUDw,,,Y,0,0,,,2014-02-17 15:27,2014-03-01 14:49,admin,admin,
712,128355,6764,35422,6640,0,N,N,N,CP_Drtn,TT_Task,DT_FixedDrtn,TK_NotStart,HHI.1174,"Fit,Weld Nozzle on Shell",,0,0,10,0,0,0,10,0,0,0,,,,2014-06-24 07:00,2014-06-24 17:00,,2014-06-24 07:00,2014-06-24 17:00,2014-06-24 07:00,2014-06-24 17:00,2014-06-24 07:00,2014-06-24 17:00,2014-06-24 07:00,2014-06-24 17:00,,PT_Normal,,,,,6RJA1AChQZeLeRo6lkLCGA,mlspKW46hUaYWNyQ/BTQTg,,,Y,0,0,,,2014-02-17 15:27,2014-03-01 14:49,admin,admin,
713,128356,6764,35423,6640,0,N,N,N,CP_Drtn,TT_Task,DT_FixedDrtn,TK_NotStart,HHI.1176,Perform RT for Tank#1 & #2,,0,0,10,0,0,0,10,0,0,0,,,,2014-06-25 07:00,2014-06-25 17:00,,2014-06-25 07:00,2014-06-25 17:00,2014-06-25 07:00,2014-06-25 17:00,2014-06-25 07:00,2014-06-25 17:00,2014-06-25 07:00,2014-06-25 17:00,,PT_Normal,,,,,IYQeT5NMSaG+RVMznhgUXg,qPup9iKr3ka/55OpWgfT3A,,,Y,0,0,,,2014-02-17 15:27,2014-03-01 14:49,admin,admin,
714,128357,6764,35425,6640,0,N,N,N,CP_Drtn,TT_Task,DT_FixedDrtn,TK_NotStart,HHI.1053,Erect & Tack Shell Course # 2& Install Stagging Brackets,,0,0,10,0,340,340,10,48,0,48,,,,2014-03-24 07:00,2014-03-24 17:00,,2014-03-24 07:00,2014-03-24 17:00,2014-03-24 07:00,2014-03-24 17:00,2014-03-24 07:00,2014-03-24 17:00,2014-03-24 07:00,2014-03-24 17:00,,PT_Normal,,,,,szInWTRTRjewYGT7w9hNhQ,hwRMt4VHQwu+R74bo37vWA,,,Y,0,0,,,2014-02-17 15:27,2014-03-01 14:49,admin,admin,
715,128358,6764,35425,6640,0,N,N,N,CP_Drtn,TT_Task,DT_FixedDrtn,TK_NotStart,HHI.1054,Weld Outer Vertical Seam/Install the Stairways support on Shell,,0,0,10,0,384.000002,384.000002,10,85.333333,0,85.333333,,,,2014-03-25 07:00,2014-03-25 17:00,,2014-03-25 07:00,2014-03-25 17:00,2014-03-25 07:00,2014-03-25 17:00,2014-03-25 07:00,2014-03-25 17:00,2014-03-25 07:00,2014-03-25 17:00,,PT_Normal,,,,,OR6WBNj4R1i4lUsESAhUGQ,maydz4p2TIia+9wvFxgCjw,,,Y,0,0,,,2014-02-17 15:27,2014-03-01 14:49,admin,admin,
716,128359,6764,35425,6640,0,N,N,N,CP_Drtn,TT_Task,DT_FixedDrtn,TK_NotStart,HHI.1055,"Backgouge,Grinding & NDT Inside Vertical Seam",,0,0,10,0,97.111111,97.111111,10,33.066667,0,33.066667,,,,2014-03-26 07:00,2014-03-26 17:00,,2014-03-26 07:00,2014-03-26 17:00,2014-03-26 07:00,2014-03-26 17:00,2014-03-26 07:00,2014-03-26 17:00,2014-03-26 07:00,2014-03-26 17:00,,PT_Normal,,,,,j1nwyE+zTIeXP/TC2wf7pw,mggKz3G+Rb23ITnJYzPOHQ,,,Y,0,0,,,2014-02-17 15:27,2014-03-01 14:49,admin,admin,
717,128360,6764,35425,6640,0,N,N,N,CP_Drtn,TT_Task,DT_FixedDrtn,TK_NotStart,HHI.1056,Weld Inside Vertical Seam,,0,0,10,0,202.666668,202.666668,10,85.333333,0,85.333333,,,,2014-03-27 07:00,2014-03-27 17:00,,2014-03-27 07:00,2014-03-27 17:00,2014-03-27 07:00,2014-03-27 17:00,2014-03-27 07:00,2014-03-27 17:00,2014-03-27 07:00,2014-03-27 17:00,,PT_Normal,,,,,RTq1wxZKSOWnEzkLp8ooLg,cchqaBaUTW6p7l0BJ49woA,,,Y,0,0,,,2014-02-17 15:27,2014-03-01 14:49,admin,admin,
718,128361,6764,35425,6640,0,N,N,N,CP_Drtn,TT_Task,DT_FixedDrtn,TK_NotStart,HHI.1057,Weld Outer Horizontal Seam between Shell Course # 1 & 2,,0,0,30,0,608,608,30,166.4,0,166.4,,,,2014-03-29 07:00,2014-03-31 17:00,,2014-03-29 07:00,2014-03-31 17:00,2014-03-29 07:00,2014-03-31 17:00,2014-03-29 07:00,2014-03-31 17:00,2014-03-29 07:00,2014-03-31 17:00,,PT_Normal,,,,,9JZ+rY2tSdWzRmCXp7wPwQ,XKzzRLOLTuaZ4DwLGZZ3cg,,,Y,0,0,,,2014-02-17 15:27,2014-03-01 14:49,admin,admin,
719,128362,6764,35425,6640,0,N,N,N,CP_Drtn,TT_Task,DT_FixedDrtn,TK_NotStart,HHI.1058,Backgouge & NDT Inside Horizontal Seam between Shell Course# 1 & 2,,0,0,10,0,122.666668,122.666668,10,85.333333,0,85.333333,,,,2014-04-01 07:00,2014-04-01 17:00,,2014-04-01 07:00,2014-04-01 17:00,2014-04-01 07:00,2014-04-01 17:00,2014-04-01 07:00,2014-04-01 17:00,2014-04-01 07:00,2014-04-01 17:00,,PT_Normal,,,,,R+56gNCsRFOIrBJthDy7/Q,14P6S9m2SZqlbNiHK//JgQ,,,Y,0,0,,,2014-02-17 15:27,2014-03-01 14:49,admin,admin,
720,128363,6764,35425,6640,0,N,N,N,CP_Drtn,TT_Task,DT_FixedDrtn,TK_NotStart,HHI.1059,"Weld Inner Horizontal Seam between Shell Course # 1 & 2""""",,0,0,10,0,608,608,10,166.4,0,166.4,,,,2014-04-02 07:00,2014-04-02 17:00,,2014-04-02 07:00,2014-04-02 17:00,2014-04-02 07:00,2014-04-02 17:00,2014-04-02 07:00,2014-04-02 17:00,2014-04-02 07:00,2014-04-02 17:00,,PT_Normal,,,,,AzCMgOSURne9u/QyQ8temQ,oIVF7CkeQZCqw7basJPv5w,,,Y,0,0,,,2014-02-17 15:27,2014-03-01 14:49,admin,admin,
721,128364,6764,35425,6640,0,N,N,N,CP_Drtn,TT_Task,DT_FixedDrtn,TK_NotStart,HHI.1060,Weld Shell Course# 1 to Annular Plate (from inside),,0,0,10,0,405.333336,405.333336,10,85.333333,0,85.333333,,,,2014-04-03 07:00,2014-04-03 17:00,,2014-04-03 07:00,2014-04-03 17:00,2014-04-03 07:00,2014-04-03 17:00,2014-04-03 07:00,2014-04-03 17:00,2014-04-03 07:00,2014-04-03 17:00,,PT_Normal,,,,,YhLiKThLQJSugMtH1HsOUA,zSfOExBoQQ69gi7lq3xMKw,,,Y,0,0,,,2014-02-17 15:27,2014-03-01 14:49,admin,admin,
722,128365,6764,35425,6640,0,N,N,N,CP_Drtn,TT_Task,DT_FixedDrtn,TK_NotStart,HHI.1061,"Perform PT from inside,Complete the welding from outside & Perform Vaccum Box Testing",,0,0,20,0,426.666665,426.666665,20,128,0,128,,,,2014-04-05 07:00,2014-04-06 17:00,,2014-04-05 07:00,2014-04-06 17:00,2014-04-05 07:00,2014-04-06 17:00,2014-04-05 07:00,2014-04-06 17:00,2014-04-05 07:00,2014-04-06 17:00,,PT_Normal,,,,,7WXCQ5AwQ2KDyoE3krIz2Q,dIAiODTxRbS5qcf02ODhjg,,,Y,0,0,,,2014-02-17 15:27,2014-03-01 14:49,admin,admin,
723,128366,6764,35425,6640,0,N,N,N,CP_Drtn,TT_Task,DT_FixedDrtn,TK_NotStart,HHI.1063,Quailty Check(Visual Inspection),,0,0,140,0,34.222222,34.222222,140,33.066667,0,33.066667,,,,2014-03-24 07:00,2014-04-08 17:00,,2014-03-24 07:00,2014-04-08 17:00,2014-03-24 07:00,2014-04-08 17:00,2014-03-24 07:00,2014-04-08 17:00,2014-03-24 07:00,2014-04-08 17:00,,PT_Normal,,,,,9EYQvJoQQNenvdyjjLzxfw,FX+eMbfPQZKcMrBCCA8M5w,,,Y,0,0,,,2014-02-17 15:27,2014-03-01 14:49,admin,admin,
724,128367,6764,35425,6640,0,N,N,N,CP_Drtn,TT_Task,DT_FixedDrtn,TK_NotStart,HHI.1062,Weld Bottom Sketch Plates to Annular Plate,,0,0,20,0,0,0,20,0,0,0,,,,2014-04-07 07:00,2014-04-08 17:00,,2014-04-07 07:00,2014-04-08 17:00,2014-04-07 07:00,2014-04-08 17:00,2014-04-07 07:00,2014-04-08 17:00,2014-04-07 07:00,2014-04-08 17:00,,PT_Normal,,,,,Ltx3D4kqRwSGIsI7Y+R1pw,yLzDaVu5pU+CraXDWNW+4A,,,Y,0,0,,,2014-02-17 15:27,2014-03-01 14:49,admin,admin,
725,128368,6764,35426,6640,0,N,N,N,CP_Drtn,TT_Task,DT_FixedDrtn,TK_NotStart,HHI.1064,Perform RT for Tank#1 & #2,,0,0,10,0,0,0,10,0,0,0,,,,2014-04-09 07:00,2014-04-09 17:00,,2014-04-09 07:00,2014-04-09 17:00,2014-04-09 07:00,2014-04-09 17:00,2014-04-09 07:00,2014-04-09 17:00,2014-04-09 07:00,2014-04-09 17:00,,PT_Normal,,,,,IEycjkJlRSWVjeDYk3a6MQ,GWmJtkqsBUq0z1uOQfCLww,,,Y,0,0,,,2014-02-17 15:27,2014-03-01 14:49,admin,admin,
726,128369,6764,35427,6640,0,N,N,N,CP_Drtn,TT_Task,DT_FixedDrtn,TK_NotStart,HHI.1043,Weld Outer Vertical Seam/Install the Stairways support on Shell,,0,0,10,0,384.000002,384.000002,10,85.333333,0,85.333333,,,,2014-03-23 07:00,2014-03-23 17:00,,2014-03-23 07:00,2014-03-23 17:00,2014-03-23 07:00,2014-03-23 17:00,2014-03-23 07:00,2014-03-23 17:00,2014-03-23 07:00,2014-03-23 17:00,,PT_Normal,,,,,MmwA68uaSYuoEJWE7qymXg,WdSX8h6yTQqe1/hl2V+lcA,,,Y,0,0,,,2014-02-17 15:27,2014-03-01 14:49,admin,admin,
727,128370,6764,35427,6640,0,N,N,N,CP_Drtn,TT_Task,DT_FixedDrtn,TK_NotStart,HHI.1044,"Backgouge,Grinding & NDT Inside Vertical Seam",,0,0,10,0,101.333333,101.333333,10,33.066667,0,33.066667,,,,2014-03-24 07:00,2014-03-24 17:00,,2014-03-24 07:00,2014-03-24 17:00,2014-03-24 07:00,2014-03-24 17:00,2014-03-24 07:00,2014-03-24 17:00,2014-03-24 07:00,2014-03-24 17:00,,PT_Normal,,,,,70XlqPCPQ46dhCr1UWj0GQ,A5OZqoRhT82pbNbnwnKb4A,,,Y,0,0,,,2014-02-17 15:27,2014-03-01 14:49,admin,admin,
728,128371,6764,35427,6640,0,N,N,N,CP_Drtn,TT_Task,DT_FixedDrtn,TK_NotStart,HHI.1045,Weld Inside Vertical Seam,,0,0,10,0,202.666668,202.666668,10,85.333333,0,85.333333,,,,2014-03-25 07:00,2014-03-25 17:00,,2014-03-25 07:00,2014-03-25 17:00,2014-03-25 07:00,2014-03-25 17:00,2014-03-25 07:00,2014-03-25 17:00,2014-03-25 07:00,2014-03-25 17:00,,PT_Normal,,,,,sZA1R5GmSsysaqNBH5kC2Q,h0+iKTxZTUKGnnF2vbxz9w,,,Y,0,0,,,2014-02-17 15:27,2014-03-01 14:49,admin,admin,
729,128372,6764,35427,6640,0,N,N,N,CP_Drtn,TT_Task,DT_FixedDrtn,TK_NotStart,HHI.1046,Weld Outer Horizontal Seam between Shell Course # 1 & 2,,0,0,30,0,608,608,30,166.4,0,166.4,,,,2014-03-26 07:00,2014-03-29 17:00,,2014-03-26 07:00,2014-03-29 17:00,2014-03-26 07:00,2014-03-29 17:00,2014-03-26 07:00,2014-03-29 17:00,2014-03-26 07:00,2014-03-29 17:00,,PT_Normal,,,,,jXpmgCQcR9iqB6bbim5Y0w,06rvLb3xTIqifYvuihqdRw,,,Y,0,0,,,2014-02-17 15:27,2014-03-01 14:49,admin,admin,
730,128373,6764,35427,6640,0,N,N,N,CP_Drtn,TT_Task,DT_FixedDrtn,TK_NotStart,HHI.1047,"""""Backgouge & NDT Inside Horizontal Seam between Shell Course# 1 & 2""""",,0,0,10,0,122.666668,122.666668,10,85.333333,0,85.333333,,,,2014-03-30 07:00,2014-03-30 17:00,,2014-03-30 07:00,2014-03-30 17:00,2014-03-30 07:00,2014-03-30 17:00,2014-03-30 07:00,2014-03-30 17:00,2014-03-30 07:00,2014-03-30 17:00,,PT_Normal,,,,,YKhKjspBROqfulrMxL9qrA,HmrJubckRv6zGqwx33uYGg,,,Y,0,0,,,2014-02-17 15:27,2014-03-01 14:49,admin,admin,
731,128374,6764,35427,6640,0,N,N,N,CP_Drtn,TT_Task,DT_FixedDrtn,TK_NotStart,HHI.1048,"Weld Inner Horizontal Seam between Shell Course # 1 & 2""""",,0,0,10,0,608,608,10,166.4,0,166.4,,,,2014-03-31 07:00,2014-03-31 17:00,,2014-03-31 07:00,2014-03-31 17:00,2014-03-31 07:00,2014-03-31 17:00,2014-03-31 07:00,2014-03-31 17:00,2014-03-31 07:00,2014-03-31 17:00,,PT_Normal,,,,,+wjxEJUvQQCgm5dwP87a/g,V5ynLFowSuuH7dy6Cy40LA,,,Y,0,0,,,2014-02-17 15:27,2014-03-01 14:49,admin,admin,
732,128375,6764,35427,6640,0,N,N,N,CP_Drtn,TT_Task,DT_FixedDrtn,TK_NotStart,HHI.1049,Weld Shell Course# 1 to Annular Plate (from inside),,0,0,10,0,405.333336,405.333336,10,85.333333,0,85.333333,,,,2014-04-01 07:00,2014-04-01 17:00,,2014-04-01 07:00,2014-04-01 17:00,2014-04-01 07:00,2014-04-01 17:00,2014-04-01 07:00,2014-04-01 17:00,2014-04-01 07:00,2014-04-01 17:00,,PT_Normal,,,,,/FA4M5sPQ1+OLY/dWrDlDw,Ky1BBrIxR0mqt1QWto19ww,,,Y,0,0,,,2014-02-17 15:27,2014-03-01 14:49,admin,admin,
733,128376,6764,35427,6640,0,N,N,N,CP_Drtn,TT_Task,DT_FixedDrtn,TK_NotStart,HHI.1050,"Perform PT from inside,Complete the welding from outside & Perform Vaccum Box Testing",,0,0,20,0,426.666665,426.666665,20,128,0,128,,,,2014-04-02 07:00,2014-04-03 17:00,,2014-04-02 07:00,2014-04-03 17:00,2014-04-02 07:00,2014-04-03 17:00,2014-04-02 07:00,2014-04-03 17:00,2014-04-02 07:00,2014-04-03 17:00,,PT_Normal,,,,,I8pp6k65RzSEaAAjwSSW7g,ZC3nA+5NQAid87LNziXj4Q,,,Y,0,0,,,2014-02-17 15:27,2014-03-01 14:49,admin,admin,
734,128377,6764,35427,6640,0,N,N,N,CP_Drtn,TT_Task,DT_FixedDrtn,TK_NotStart,HHI.1052,Quailty Check(Visual Inspection),,0,0,140,0,27.111111,27.111111,140,33.066667,0,33.066667,,,,2014-03-22 07:00,2014-04-06 17:00,,2014-03-22 07:00,2014-04-06 17:00,2014-03-22 07:00,2014-04-06 17:00,2014-03-22 07:00,2014-04-06 17:00,2014-03-22 07:00,2014-04-06 17:00,,PT_Normal,,,,,i56wT9ngRAWnRWPU/nF52g,sMzzmi0fRz6dJbORhn/m8g,,,Y,0,0,,,2014-02-17 15:27,2014-03-01 14:49,admin,admin,
735,128378,6764,35427,6640,0,N,N,N,CP_Drtn,TT_Task,DT_FixedDrtn,TK_NotStart,HHI.1042,Erect & Tack Shell Course # 2 & Install Stagging Brackets,,0,0,10,0,272,272,10,32,0,32,,,,2014-03-22 07:00,2014-03-22 17:00,,2014-03-22 07:00,2014-03-22 17:00,2014-03-22 07:00,2014-03-22 17:00,2014-03-22 07:00,2014-03-22 17:00,2014-03-22 07:00,2014-03-22 17:00,,PT_Normal,,,,,N6+3ambpQNGgLM666sBEwQ,qnNfoX3NRpal3qf8f6i3gg,,,Y,0,0,,,2014-02-17 15:27,2014-03-01 14:49,admin,admin,
736,128379,6764,35427,6640,0,N,N,N,CP_Drtn,TT_Task,DT_FixedDrtn,TK_NotStart,HHI.1051,Weld Bottom Sketch Plates to Annular Plate,,0,0,20,0,0,0,20,0,0,0,,,,2014-04-05 07:00,2014-04-06 17:00,,2014-04-05 07:00,2014-04-06 17:00,2014-04-05 07:00,2014-04-06 17:00,2014-04-05 07:00,2014-04-06 17:00,2014-04-05 07:00,2014-04-06 17:00,,PT_Normal,,,,,qP2vw5iPSJuLkezZAU4Hmg,JwH6padSlEeKXthXTKa7lw,,,Y,0,0,,,2014-02-17 15:27,2014-03-01 14:49,admin,admin,
737,128380,6764,35430,6640,0,N,N,N,CP_Drtn,TT_Task,DT_FixedDrtn,TK_NotStart,HHI.1237,Weld & Align Roof Columns,,700,0,20,0,0,0,20,0,0,0,,,,2014-12-25 16:00,2014-12-28 16:00,,2014-10-02 16:00,2014-10-07 16:00,2014-10-02 16:00,2014-10-07 16:00,2014-10-02 16:00,2014-10-07 16:00,2014-12-25 16:00,2014-12-28 16:00,,PT_Normal,,,,,IAbOZTjXTLKm0ASpjbu+fA,H9pBXegBlUS3bdBgRTnGUw,,,N,0,0,,,2014-02-17 15:27,2014-03-01 17:08,admin,admin,
738,128381,6764,35431,6640,0,N,N,N,CP_Drtn,TT_Task,DT_FixedDrtn,TK_NotStart,HHI.1238,Weld & Align Roof Columns,,510,0,20,0,0,0,20,0,0,0,,,,2014-12-27 16:00,2014-12-29 16:00,,2014-10-28 16:00,2014-10-30 16:00,2014-10-28 16:00,2014-10-30 16:00,2014-10-28 16:00,2014-10-30 16:00,2014-12-27 16:00,2014-12-29 16:00,,PT_Normal,,,,,InqhyLfrRwy3cooCq5Zc0g,NaFk4IMqZkas5L0N+Zk43w,,,N,0,0,,,2014-02-17 15:27,2014-03-01 17:08,admin,admin,
739,128382,6764,35433,6640,0,N,N,N,CP_Drtn,TT_Task,DT_FixedDrtn,TK_NotStart,HHI.1242,Perform Roof Surface Preparation & Painting,,730,0,30,0,288,288,30,96,0,96,,,,2015-01-04 16:00,2015-01-07 16:00,,2014-10-11 16:00,2014-10-14 16:00,2014-10-11 16:00,2014-10-14 16:00,2014-10-11 16:00,2014-10-14 16:00,2015-01-04 16:00,2015-01-07 16:00,,PT_Normal,,,,,wZKWqVwPQWGV4Q13V5Inbw,8lIQEszWTWyhHn1H9K2pZA,,,N,0,0,,,2014-02-17 15:27,2014-03-01 17:08,admin,admin,
740,128383,6764,35433,6640,0,N,N,N,CP_Drtn,TT_Task,DT_FixedDrtn,TK_NotStart,HHI.1241,Perform Shell Surface Preparation & Painting,,700,0,40,0,280,280,40,80,0,80,,,,2014-12-27 16:00,2014-12-31 16:00,,2014-10-06 16:00,2014-10-11 16:00,2014-10-06 16:00,2014-10-11 16:00,2014-10-06 16:00,2014-10-11 16:00,2014-12-27 16:00,2014-12-31 16:00,,PT_Normal,,,,,oAs8IH3nQNqfnSNprKxSEg,eCUXkM9PQRmsxXomxbZ0mg,,,N,0,0,,,2014-02-17 15:27,2014-03-01 17:08,admin,admin,
741,128384,6764,35433,6640,0,N,N,N,CP_Drtn,TT_Task,DT_FixedDrtn,TK_NotStart,HHI.1243,Quailty Check,,730,30,70,0,285.48,285.48,70,351.36,0,351.36,,,,2014-12-30 16:00,2015-01-07 16:00,,2014-10-06 16:00,2014-10-14 16:00,2014-10-06 16:00,2014-10-14 16:00,2014-10-06 16:00,2014-10-14 16:00,2014-12-30 16:00,2015-01-07 16:00,,PT_Normal,,,,,wnsrm4WFRXie0qOH4Glb2w,tTvusFLqTSaxDR/HdpCHWQ,,,N,0,0,,,2014-02-17 15:27,2014-03-01 17:08,admin,admin,
742,128385,6764,35434,6640,0,N,N,N,CP_Drtn,TT_Task,DT_FixedDrtn,TK_NotStart,HHI.1249,Quailty Check (including Holiday Test),,700,0,230,0,103.009524,103.009524,230,515.04762,0,515.04762,,,,2015-01-07 16:00,2015-02-03 16:00,,2014-10-18 16:00,2014-11-13 16:00,2014-10-18 16:00,2014-11-13 16:00,2014-10-18 16:00,2014-11-13 16:00,2015-01-07 16:00,2015-02-03 16:00,,PT_Normal,,,,,1GPBkw/RRca5wDJ0B2W7Cg,/Ya8wZ1IT4O2Y54v95J7OQ,,,N,0,0,,,2014-02-17 15:27,2014-03-01 17:08,admin,admin,
743,128386,6764,35434,6640,0,N,N,N,CP_Drtn,TT_Task,DT_FixedDrtn,TK_NotStart,HHI.1245,Perform Roof Underside Surface Preparation & Painting,,700,0,60,0,1133.104762,1133.104762,60,206.019048,0,206.019048,,,,2015-01-07 16:00,2015-01-14 16:00,,2014-10-18 16:00,2014-10-25 16:00,2014-10-18 16:00,2014-10-25 16:00,2014-10-18 16:00,2014-10-25 16:00,2015-01-07 16:00,2015-01-14 16:00,,PT_Normal,,,,,GLP/I3InSVOLYIYFDXTTWg,+xvbCV90TziEY0xSVIWBcA,,,N,0,0,,,2014-02-17 15:27,2014-03-01 17:08,admin,admin,
744,128387,6764,35434,6640,0,N,N,N,CP_Drtn,TT_Task,DT_FixedDrtn,TK_NotStart,HHI.1248,Perform Bottom Surface Preparation & Painting,,710,10,30,0,0,0,30,0,0,0,,,,2015-01-31 16:00,2015-02-03 16:00,,2014-11-09 16:00,2014-11-12 16:00,2014-11-09 16:00,2014-11-12 16:00,2014-11-09 16:00,2014-11-12 16:00,2015-01-31 16:00,2015-02-03 16:00,,PT_Normal,,,,,PJGo3I74SS+k2wm0gq2dFQ,gvs+9YRw8k2SvcG5xAtYLQ,,,N,0,0,,,2014-02-17 15:27,2014-03-01 17:08,admin,admin,
745,128388,6764,35434,6640,0,N,N,N,CP_Drtn,TT_Task,DT_FixedDrtn,TK_NotStart,HHI.1246,Perform Shell course Surface Preparation & Painting,,710,0,80,0,0,0,80,0,0,0,,,,2015-01-15 16:00,2015-01-25 16:00,,2014-10-25 16:00,2014-11-03 16:00,2014-10-25 16:00,2014-11-03 16:00,2014-10-25 16:00,2014-11-03 16:00,2015-01-15 16:00,2015-01-25 16:00,,PT_Normal,,,,,tMmU1gAURX+oNEYCdAFqQg,ijZ1dp/tK0eZ20D+JBP09g,,,N,0,0,,,2014-02-17 15:27,2014-03-01 17:08,admin,admin,
746,128389,6764,35434,6640,0,N,N,N,CP_Drtn,TT_Task,DT_FixedDrtn,TK_NotStart,HHI.1244,Install Scaffoldings,,700,0,100,0,0,0,100,0,0,0,,,,2014-12-27 16:00,2015-01-07 16:00,,2014-10-06 16:00,2014-10-18 16:00,2014-10-06 16:00,2014-10-18 16:00,2014-10-06 16:00,2014-10-18 16:00,2014-12-27 16:00,2015-01-07 16:00,,PT_Normal,,,,,QGUF+T0rSQa00yCiIcC0Xg,vJCOT90M0UeGfdwvgVjfFw,,,N,0,0,,,2014-02-17 15:27,2014-03-01 17:08,admin,admin,
747,128390,6764,35434,6640,0,N,N,N,CP_Drtn,TT_Task,DT_FixedDrtn,TK_NotStart,HHI.1247,Dismantle Scaffoldings,,710,0,50,0,0,0,50,0,0,0,,,,2015-01-25 16:00,2015-01-31 16:00,,2014-11-03 16:00,2014-11-09 16:00,2014-11-03 16:00,2014-11-09 16:00,2014-11-03 16:00,2014-11-09 16:00,2015-01-25 16:00,2015-01-31 16:00,,PT_Normal,,,,,1iaQZZrIQqGso9jI8hNbLA,pUaLsMhLi0SY/WVus7Cl3A,,,N,0,0,,,2014-02-17 15:27,2014-03-01 17:08,admin,admin,
748,128391,6764,35436,6640,0,N,N,N,CP_Drtn,TT_Task,DT_FixedDrtn,TK_NotStart,HHI.1251,Perform Roof Surface Preparation & Painting,,540,0,30,0,288,288,30,96,0,96,,,,2015-01-05 16:00,2015-01-08 16:00,,2014-11-03 16:00,2014-11-06 16:00,2014-11-03 16:00,2014-11-06 16:00,2014-11-03 16:00,2014-11-06 16:00,2015-01-05 16:00,2015-01-08 16:00,,PT_Normal,,,,,bOLFudKwQoS6yzQoOt9fpg,4RuWHVbXUkusNiar7PKZLw,,,N,0,0,,,2014-02-17 15:27,2014-03-01 17:08,admin,admin,
749,128392,6764,35436,6640,0,N,N,N,CP_Drtn,TT_Task,DT_FixedDrtn,TK_NotStart,HHI.1250,Perform Shell Surface Preparation & Painting,,510,0,40,0,280,280,40,80,0,80,,,,2014-12-28 16:00,2015-01-01 16:00,,2014-10-29 16:00,2014-11-03 16:00,2014-10-29 16:00,2014-11-03 16:00,2014-10-29 16:00,2014-11-03 16:00,2014-12-28 16:00,2015-01-01 16:00,,PT_Normal,,,,,m09Bno4RQhSCf3bF0VLmyw,1+t+51O2e02KpkwKcWaAMw,,,N,0,0,,,2014-02-17 15:27,2014-03-01 17:08,admin,admin,
750,128393,6764,35436,6640,0,N,N,N,CP_Drtn,TT_Task,DT_FixedDrtn,TK_NotStart,HHI.1252,Quailty Check,,540,30,70,0,285.48,285.48,70,351.36,0,351.36,,,,2014-12-31 16:00,2015-01-08 16:00,,2014-10-29 16:00,2014-11-06 16:00,2014-10-29 16:00,2014-11-06 16:00,2014-10-29 16:00,2014-11-06 16:00,2014-12-31 16:00,2015-01-08 16:00,,PT_Normal,,,,,NSPeUHOCT1uytjXoF0fpzA,FLw20exVo0a3cOO/NUUtNw,,,N,0,0,,,2014-02-17 15:27,2014-03-01 17:08,admin,admin,
751,128394,6764,35437,6640,0,N,N,N,CP_Drtn,TT_Task,DT_FixedDrtn,TK_NotStart,HHI.1258,Quailty Check (including Holiday Test),,510,0,220,0,103.009524,103.009524,220,515.04762,0,515.04762,,,,2015-01-08 16:00,2015-02-03 16:00,,2014-11-10 16:00,2014-12-06 16:00,2014-11-10 16:00,2014-12-06 16:00,2014-11-10 16:00,2014-12-06 16:00,2015-01-08 16:00,2015-02-03 16:00,,PT_Normal,,,,,OhCkaZgtSryQ5sBJIeOblQ,L0x2I8+2akmDghJAD3ZqSw,,,N,0,0,,,2014-02-17 15:27,2014-03-01 17:08,admin,admin,
752,128395,6764,35437,6640,0,N,N,N,CP_Drtn,TT_Task,DT_FixedDrtn,TK_NotStart,HHI.1254,Perform Roof Underside Surface Preparation & Painting,,510,0,60,0,1133.104762,1133.104762,60,206.019048,0,206.019048,,,,2015-01-08 16:00,2015-01-15 16:00,,2014-11-10 16:00,2014-11-17 16:00,2014-11-10 16:00,2014-11-17 16:00,2014-11-10 16:00,2014-11-17 16:00,2015-01-08 16:00,2015-01-15 16:00,,PT_Normal,,,,,5q02RWPGRwe2FdXig0Cudw,+iMaYmYo9UKhJtR5xr9Jcw,,,N,0,0,,,2014-02-17 15:27,2014-03-01 17:08,admin,admin,
753,128396,6764,35437,6640,0,N,N,N,CP_Drtn,TT_Task,DT_FixedDrtn,TK_NotStart,HHI.1257,Perform Bottom Surface Preparation & Painting,,510,0,30,0,0,0,30,0,0,0,,,,2015-01-31 16:00,2015-02-03 16:00,,2014-12-02 16:00,2014-12-06 16:00,2014-12-02 16:00,2014-12-06 16:00,2014-12-02 16:00,2014-12-06 16:00,2015-01-31 16:00,2015-02-03 16:00,,PT_Normal,,,,,Bmu1qjuxTxGy+HgsU+Ac5Q,M+2TEj0FbEmKKcO3Paoi9A,,,N,0,0,,,2014-02-17 15:27,2014-03-01 17:08,admin,admin,
754,128397,6764,35437,6640,0,N,N,N,CP_Drtn,TT_Task,DT_FixedDrtn,TK_NotStart,HHI.1255,Perform Shell course Surface Preparation & Painting,,510,0,80,0,0,0,80,0,0,0,,,,2015-01-15 16:00,2015-01-25 16:00,,2014-11-17 16:00,2014-11-26 16:00,2014-11-17 16:00,2014-11-26 16:00,2014-11-17 16:00,2014-11-26 16:00,2015-01-15 16:00,2015-01-25 16:00,,PT_Normal,,,,,YJ7JqAXYSZ+X9hp1F+KB0w,Rcq/UYvOz0e31u1WHxYkKg,,,N,0,0,,,2014-02-17 15:27,2014-03-01 17:08,admin,admin,
755,128398,6764,35437,6640,0,N,N,N,CP_Drtn,TT_Task,DT_FixedDrtn,TK_NotStart,HHI.1253,Install Scaffoldings,,510,0,100,0,0,0,100,0,0,0,,,,2014-12-28 16:00,2015-01-08 16:00,,2014-10-29 16:00,2014-11-10 16:00,2014-10-29 16:00,2014-11-10 16:00,2014-10-29 16:00,2014-11-10 16:00,2014-12-28 16:00,2015-01-08 16:00,,PT_Normal,,,,,NVSNt5vyRIe7cnSChX/txA,UhTg3rTRBkKEK/DxHCsyGg,,,N,0,0,,,2014-02-17 15:27,2014-03-01 17:08,admin,admin,
756,128399,6764,35437,6640,0,N,N,N,CP_Drtn,TT_Task,DT_FixedDrtn,TK_NotStart,HHI.1256,Dismantle Scaffoldings,,510,0,50,0,0,0,50,0,0,0,,,,2015-01-25 16:00,2015-01-31 16:00,,2014-11-26 16:00,2014-12-02 16:00,2014-11-26 16:00,2014-12-02 16:00,2014-11-26 16:00,2014-12-02 16:00,2015-01-25 16:00,2015-01-31 16:00,,PT_Normal,,,,,ln3JpNVTR36LdnTKFj8iAg,k+QNvW47+E6UpOHZK+ozgQ,,,N,0,0,,,2014-02-17 15:27,2014-03-01 17:08,admin,admin,
757,128400,6764,35439,6640,0,N,N,N,CP_Drtn,TT_Task,DT_FixedDrtn,TK_NotStart,HHI.1232,Remove Stagging Blanks/Brackets & Install Blind Flanges,,0,0,20,0,936,936,20,72,0,72,,,,2014-08-28 11:00,2014-08-30 16:00,,2014-08-28 11:00,2014-08-30 16:00,2014-08-28 11:00,2014-08-30 16:00,2014-08-28 11:00,2014-08-30 16:00,2014-08-28 11:00,2014-08-30 16:00,,PT_Normal,,,,,CuQ7+ST1ReWZ/r+9RPOIXQ,vWl4eqaiSKWp4M/kuUyXgg,,,Y,0,0,,,2014-02-17 15:27,2014-03-01 17:03,admin,admin,
758,128401,6764,35439,6640,0,N,N,N,CP_Drtn,TT_Task,DT_FixedDrtn,TK_NotStart,HHI.1234,Hold & Inspect Water for 24 Hours,,0,0,10,0,34.133333,34.133333,10,85.333334,0,85.333334,,,,2014-10-08 16:00,2014-10-09 16:00,,2014-10-08 16:00,2014-10-09 16:00,2014-10-08 16:00,2014-10-09 16:00,2014-10-08 16:00,2014-10-09 16:00,2014-10-08 16:00,2014-10-09 16:00,,PT_Normal,,,,,KeRLcsXjTASMhPLCM7R8FQ,2SZSf6CpQk2LnwH3I0kFJQ,,,Y,0,0,,,2014-02-17 15:27,2014-03-01 17:03,admin,admin,
759,128402,6764,35439,6640,0,N,N,N,CP_Drtn,TT_Task,DT_FixedDrtn,TK_NotStart,HHI.1235,Drain Water from Tank & Transfer to Demenarlized Tanks 1&2,,0,0,160,0,80,80,160,85.333334,0,85.333334,,,,2014-10-09 16:00,2014-10-28 16:00,,2014-10-09 16:00,2014-10-28 16:00,2014-10-09 16:00,2014-10-28 16:00,2014-10-09 16:00,2014-10-28 16:00,2014-10-09 16:00,2014-10-28 16:00,,PT_Normal,,,,,5ogSbqTgSmOKyZI3uIg7QQ,MFByrT3eT+Kcbsm3X4czpQ,,,Y,0,0,,,2014-02-17 15:27,2014-03-01 17:03,admin,admin,
760,128403,6764,35439,6640,0,N,N,N,CP_Drtn,TT_Task,DT_FixedDrtn,TK_NotStart,HHI.1236,"Build Mobile Scaffolding,Internal CLeaning&Dismantling/Quailty Check",,510,0,40,0,25.6,25.6,40,42.666666,0,42.666666,,,,2014-12-27 16:00,2014-12-31 16:00,,2014-10-28 16:00,2014-11-02 16:00,2014-10-28 16:00,2014-11-02 16:00,2014-10-28 16:00,2014-11-02 16:00,2014-12-27 16:00,2014-12-31 16:00,,PT_Normal,,,,,Rga9gBy7RhyyDqdV2mZopQ,uYF4jJBwQrGDVGpQORtbCA,,,N,0,0,,,2014-02-17 15:27,2014-03-01 17:08,admin,admin,
761,128404,6764,35439,6640,0,N,N,N,CP_Drtn,TT_Task,DT_FixedDrtn,TK_NotStart,HHI.1233,Tank Water Filling/Settlement,,0,0,320,0,0,0,320,0,0,0,,,,2014-08-30 16:00,2014-10-08 16:00,,2014-08-30 16:00,2014-10-08 16:00,2014-08-30 16:00,2014-10-08 16:00,2014-08-30 16:00,2014-10-08 16:00,2014-08-30 16:00,2014-10-08 16:00,,PT_Normal,,,,,+j1V6WgkTDWfVgj07/cxFw,N+BBD8NJm0WFqt/UneVqGg,,,Y,0,0,,,2014-02-17 15:27,2014-03-01 17:03,admin,admin,
762,128405,6764,35440,6640,0,N,N,N,CP_Drtn,TT_Task,DT_FixedDrtn,TK_NotStart,HHI.1226,Remove Stagging Blanks/Brackets & Install Blind Flanges,,0,0,20,0,105.6,105.6,20,42.666666,0,42.666666,,,,2014-08-03 16:00,2014-08-05 16:00,,2014-08-03 16:00,2014-08-05 16:00,2014-08-03 16:00,2014-08-05 16:00,2014-08-03 16:00,2014-08-05 16:00,2014-08-03 16:00,2014-08-05 16:00,,PT_Normal,,,,,b1dhjZPpSamlNvndPAFH2w,DcCYJu7hRcKOAGx9QRoPtg,,,Y,0,0,,,2014-02-17 15:27,2014-03-01 17:06,admin,admin,
763,128406,6764,35440,6640,0,N,N,N,CP_Drtn,TT_Task,DT_FixedDrtn,TK_NotStart,HHI.1227,Tank Water Filling & Settlement,,0,0,320,0,1407.999998,1407.999998,320,3002.666666,0,3002.666666,,,,2014-08-05 16:00,2014-09-09 11:00,,2014-08-05 16:00,2014-09-09 11:00,2014-08-05 16:00,2014-09-09 11:00,2014-08-05 16:00,2014-09-09 11:00,2014-08-05 16:00,2014-09-09 11:00,,PT_Normal,,,,,7bbGOt7IRdaxwOTLXy9QZQ,dRaPLcvCT+e1j6dl7prz/g,,,Y,0,0,,,2014-02-17 15:27,2014-03-01 17:06,admin,admin,
764,128407,6764,35440,6640,0,N,N,N,CP_Drtn,TT_Task,DT_FixedDrtn,TK_NotStart,HHI.1228,Hold & Inspect Water for 24 Hours,,0,0,10,0,128.000001,128.000001,10,85.333333,0,85.333333,,,,2014-09-09 11:00,2014-09-10 11:00,,2014-09-09 11:00,2014-09-10 11:00,2014-09-09 11:00,2014-09-10 11:00,2014-09-09 11:00,2014-09-10 11:00,2014-09-09 11:00,2014-09-10 11:00,,PT_Normal,,,,,jni8YE3IRaiL+bO8IGDS5A,hiLFgg7iSPG97EMcDUYwZw,,,Y,0,0,,,2014-02-17 15:27,2014-03-01 17:06,admin,admin,
765,128408,6764,35440,6640,0,N,N,N,CP_Drtn,TT_Task,DT_FixedDrtn,TK_NotStart,HHI.1229,Drain Water from Tank & Transfer Desanilated Water Tank #1,,0,0,160,0,420.48,420.48,160,69.12,0,69.12,,,,2014-09-10 11:00,2014-09-29 16:00,,2014-09-10 11:00,2014-09-29 16:00,2014-09-10 11:00,2014-09-29 16:00,2014-09-10 11:00,2014-09-29 16:00,2014-09-10 11:00,2014-09-29 16:00,,PT_Normal,,,,,iWwVfHJ1TCKkSM2ci738Yw,i4hC2p/uR9Coz5h5HDJvPA,,,Y,0,0,,,2014-02-17 15:27,2014-03-01 17:06,admin,admin,
766,128409,6764,35440,6640,0,N,N,N,CP_Drtn,TT_Task,DT_FixedDrtn,TK_NotStart,HHI.1230,"Build Mobile Scaffolding,Internal CLeaning&Dismantling",,700,0,30,0,73.200001,73.200001,30,85.333334,0,85.333334,,,,2014-12-22 16:00,2014-12-25 16:00,,2014-09-29 16:00,2014-10-02 16:00,2014-09-29 16:00,2014-10-02 16:00,2014-09-29 16:00,2014-10-02 16:00,2014-12-22 16:00,2014-12-25 16:00,,PT_Normal,,,,,OT8yWWeAQCCqyc58KG4bHg,H2vxfraRTZKV7M0+x2QsQw,,,N,0,0,,,2014-02-17 15:27,2014-03-01 17:08,admin,admin,
767,128410,6764,35440,6640,0,N,N,N,CP_Drtn,TT_Task,DT_FixedDrtn,TK_NotStart,HHI.1231,Quailty Check,,700,0,10,0,50.666666,50.666666,10,42.666667,0,42.666667,,,,2014-12-25 16:00,2014-12-27 16:00,,2014-10-02 16:00,2014-10-06 16:00,2014-10-02 16:00,2014-10-06 16:00,2014-10-02 16:00,2014-10-06 16:00,2014-12-25 16:00,2014-12-27 16:00,,PT_Normal,,,,,j97YZ4jwRxS5BASMVi874w,mn4MjdzbSCqgzv5+1Q5APg,,,N,0,0,,,2014-02-17 15:27,2014-03-01 17:08,admin,admin,
768,128411,6764,35442,6640,0,N,N,N,CP_Drtn,TT_Task,DT_FixedDrtn,TK_NotStart,JF752.1259,"Install Valves,instruments & Internal Cathodic System (Supplied by client)",,700,0,10,0,0,0,10,0,0,0,,,,2015-02-03 16:00,2015-02-04 16:00,,2014-11-13 16:00,2014-11-15 16:00,2014-11-13 16:00,2014-11-15 16:00,2014-11-13 16:00,2014-11-15 16:00,2015-02-03 16:00,2015-02-04 16:00,,PT_Normal,,,,,1hlEe7h3T9Kh2kqLceQonw,,,,N,0,0,,,2014-02-17 15:27,2014-03-01 17:08,admin,admin,
769,128412,6764,35443,6640,0,N,N,N,CP_Drtn,TT_Task,DT_FixedDrtn,TK_NotStart,JF752.1260,"Install Valves,instruments & Internal Cathodic System (Supplied by client)",,510,0,10,0,0,0,10,0,0,0,,,,2015-02-03 16:00,2015-02-04 16:00,,2014-12-06 16:00,2014-12-07 16:00,2014-12-06 16:00,2014-12-07 16:00,2014-12-06 16:00,2014-12-07 16:00,2015-02-03 16:00,2015-02-04 16:00,,PT_Normal,,,,,JdMOsGsaTROREMRU9EvVJQ,,,,N,0,0,,,2014-02-17 15:27,2014-03-01 17:08,admin,admin,
770,128413,6764,35445,6640,0,N,N,N,CP_Drtn,TT_Task,DT_FixedDrtn,TK_NotStart,HHI.1239,"Fit,Weld Name Plate brackets/Attachments on shell Course #1",,700,0,10,0,17.066666,17.066666,10,42.666666,0,42.666666,,,,2014-12-25 16:00,2014-12-27 16:00,,2014-10-02 16:00,2014-10-06 16:00,2014-10-02 16:00,2014-10-06 16:00,2014-10-02 16:00,2014-10-06 16:00,2014-12-25 16:00,2014-12-27 16:00,,PT_Normal,,,,,xXAx5o2rRjyo6y2wGxx8XQ,7KgCTbdEQcWybHmN9O12Nw,,,N,0,0,,,2014-02-17 15:27,2014-03-01 17:08,admin,admin,
771,128414,6764,35446,6640,0,N,N,N,CP_Drtn,TT_Task,DT_FixedDrtn,TK_NotStart,HHI.1240,"Fit,Weld Name Plate brackets/Attachments on shell Course #1",,510,0,10,0,51.199998,51.199998,10,42.666667,0,42.666667,,,,2014-12-27 16:00,2014-12-28 16:00,,2014-10-28 16:00,2014-10-29 16:00,2014-10-28 16:00,2014-10-29 16:00,2014-10-28 16:00,2014-10-29 16:00,2014-12-27 16:00,2014-12-28 16:00,,PT_Normal,,,,,Vdr3TCWcTB23VMPoTxEiww,RyAcnkzBSiCgtUPgUgFCyQ,,,N,0,0,,,2014-02-17 15:27,2014-03-01 17:08,admin,admin,
772,128415,6764,35447,6640,0,N,N,N,CP_Drtn,TT_Mile,DT_FixedDrtn,TK_NotStart,HHI.1000,HHI Hand over Tank#1(10GHE11BB001) Foundation  to AZ,,0,0,0,0,0,0,0,0,0,0,2014-02-18 07:00,,,2014-02-18 07:00,2014-02-18 07:00,,2014-02-18 07:00,2014-02-18 07:00,2014-02-18 07:00,2014-02-18 07:00,2014-02-18 07:00,2014-02-18 07:00,2014-02-18 07:00,2014-02-18 07:00,CS_MSO,PT_Normal,,,,,i15iZod9Q7S7wuyVT9y+KQ,jZBqjg4eR2uWUdRphzKneQ,,,Y,0,0,,,2014-02-17 15:27,2014-03-01 14:49,admin,admin,
773,128416,6764,35447,6640,0,N,N,N,CP_Drtn,TT_Task,DT_FixedDrtn,TK_NotStart,HHI.1001,AZ Check Tank#1 Foundation Levelness prior to Mechanical Works,,0,0,10,0,0,0,10,0,0,0,,,,2014-02-18 07:00,2014-02-18 17:00,,2014-02-18 07:00,2014-02-18 17:00,2014-02-18 07:00,2014-02-18 17:00,2014-02-18 07:00,2014-02-18 17:00,2014-02-18 07:00,2014-02-18 17:00,,PT_Normal,,,,,v1Kc84HQSQSPymjDqkbNEA,0G+Ov/CT2EyBqY3FlGkIDA,,,Y,0,0,,,2014-02-17 15:27,2014-03-01 14:49,admin,admin,
774,128417,6764,35447,6640,0,N,N,N,CP_Drtn,TT_Mile,DT_FixedDrtn,TK_NotStart,HHI.1002,HHI Hand over Tank#2(10GHE12BB001) Foundation to AZ,,60,0,0,0,0,0,0,0,0,0,,,,2014-02-25 07:00,2014-02-25 07:00,,2014-02-18 07:00,2014-02-18 07:00,2014-02-18 07:00,2014-02-18 07:00,2014-02-18 07:00,2014-02-18 07:00,2014-02-25 07:00,2014-02-25 07:00,,PT_Normal,,,,,PcJ7JxD3RpGC5RhOqyEMzw,H8I32A1GrE2ki6CPmHjPpw,,,N,0,0,,,2014-02-17 15:27,2014-03-01 14:49,admin,admin,
775,128418,6764,35447,6640,0,N,N,N,CP_Drtn,TT_Task,DT_FixedDrtn,TK_NotStart,HHI.1003,AZ Check Tank#2 Foundation Levelness prior to Mechanical Works,,60,60,10,0,0,0,10,0,0,0,,,,2014-02-25 07:00,2014-02-25 17:00,,2014-02-18 07:00,2014-02-18 17:00,2014-02-18 07:00,2014-02-18 17:00,2014-02-18 07:00,2014-02-18 17:00,2014-02-25 07:00,2014-02-25 17:00,,PT_Normal,,,,,PNORLYj/QKe0qgmTDQVPCw,3hHp6m+gf0+yLrof6ytyfA,,,N,0,0,,,2014-02-17 15:27,2014-03-01 14:49,admin,admin,
776,128419,6764,35449,6640,0,N,N,N,CP_Drtn,TT_Task,DT_FixedDrtn,TK_NotStart,HHI.1262,Perform Final Inspection & Handover to CLient,,510,510,10,0,0,0,10,0,0,0,,,,2015-02-04 16:00,2015-02-05 16:00,,2014-12-07 16:00,2014-12-08 16:00,2014-12-07 16:00,2014-12-08 16:00,2014-12-07 16:00,2014-12-08 16:00,2015-02-04 16:00,2015-02-05 16:00,,PT_Normal,,,,,aHSj/2MBQAOibCh2yp3V7w,WTan5zwzOkKJirLrh1F4Eg,,,N,0,0,,,2014-02-17 15:27,2014-03-01 17:08,admin,admin,
777,128420,6764,35450,6640,0,N,N,N,CP_Drtn,TT_Task,DT_FixedDrtn,TK_NotStart,HHI.1261,Perform Final Inspection & Handover to CLient,,700,700,10,0,0,0,10,0,0,0,,,,2015-02-04 16:00,2015-02-05 16:00,,2014-11-15 16:00,2014-11-16 16:00,2014-11-15 16:00,2014-11-16 16:00,2014-11-15 16:00,2014-11-16 16:00,2015-02-04 16:00,2015-02-05 16:00,,PT_Normal,,,,,kM/RG/AqS3iVR4s7SgVgYg,SxrzYUiGSE62pBonO0Fv3A,,,N,0,0,,,2014-02-17 15:27,2014-03-01 17:08,admin,admin,
778,128421,6764,35453,6640,0,N,N,N,CP_Drtn,TT_Mile,DT_FixedDrtn,TK_NotStart,HHI.3001,HHI Hand over Tank (10LDP10BB001) Foundation  to AZ,,0,0,0,0,0,0,0,0,0,0,2014-04-03 07:00,,,2014-04-03 07:00,2014-04-03 07:00,,2014-04-03 07:00,2014-04-03 07:00,2014-04-03 07:00,2014-04-03 07:00,2014-04-03 07:00,2014-04-03 07:00,2014-04-03 07:00,2014-04-03 07:00,CS_MSO,PT_Normal,,,,,hs0o6Ob8TZ2SfzbnXi0Rqw,jZBqjg4eR2uWUdRphzKneQ,,,N,0,0,,,2014-02-17 15:27,2014-03-01 15:26,admin,admin,
779,128422,6764,35453,6640,0,N,N,N,CP_Drtn,TT_Task,DT_FixedDrtn,TK_NotStart,HHI.3002,AZ Check Tank Foundation Levelness prior to Mechanical Works,,1630,0,10,0,0,0,10,0,0,0,,,,2014-10-23 16:00,2014-10-25 16:00,,2014-04-03 07:00,2014-04-03 17:00,2014-04-03 07:00,2014-04-03 17:00,2014-04-03 07:00,2014-04-03 17:00,2014-10-23 16:00,2014-10-25 16:00,,PT_Normal,,,,,bGMppzqtTLWMMP66esxGcw,0G+Ov/CT2EyBqY3FlGkIDA,,,N,0,0,,,2014-02-17 15:27,2014-03-01 17:08,admin,admin,
780,128423,6764,35455,6640,0,N,N,N,CP_Drtn,TT_Task,DT_FixedDrtn,TK_NotStart,HHI.3085,Remove Stagging Blanks/Brackets & Install Blind Flanges,,1630,0,10,0,105.6,105.6,10,42.666666,0,42.666666,,,,2014-12-28 16:00,2014-12-29 16:00,,2014-06-08 07:00,2014-06-08 17:00,2014-06-08 07:00,2014-06-08 17:00,2014-06-08 07:00,2014-06-08 17:00,2014-12-28 16:00,2014-12-29 16:00,,PT_Normal,,,,,AzhOTw73Styv6wVpYmTbJg,DcCYJu7hRcKOAGx9QRoPtg,,,N,0,0,,,2014-02-17 15:27,2014-03-01 17:08,admin,admin,
781,128424,6764,35455,6640,0,N,N,N,CP_Drtn,TT_Task,DT_FixedDrtn,TK_NotStart,HHI.3086,Tank Water Filling & Settlement,,1630,0,60,0,1407.999998,1407.999998,60,3002.666666,0,3002.666666,,,,2014-12-29 16:00,2015-01-05 16:00,,2014-06-09 07:00,2014-06-15 17:00,2014-06-09 07:00,2014-06-15 17:00,2014-06-09 07:00,2014-06-15 17:00,2014-12-29 16:00,2015-01-05 16:00,,PT_Normal,,,,,QfvMpkmZSCeEO9JMy0rN7w,dRaPLcvCT+e1j6dl7prz/g,,,N,0,0,,,2014-02-17 15:27,2014-03-01 17:08,admin,admin,
782,128425,6764,35455,6640,0,N,N,N,CP_Drtn,TT_Task,DT_FixedDrtn,TK_NotStart,HHI.3087,Hold & Inspect Water for 24 Hours,,1630,0,10,0,128.000001,128.000001,10,85.333333,0,85.333333,,,,2015-01-05 16:00,2015-01-06 16:00,,2014-06-16 07:00,2014-06-16 17:00,2014-06-16 07:00,2014-06-16 17:00,2014-06-16 07:00,2014-06-16 17:00,2015-01-05 16:00,2015-01-06 16:00,,PT_Normal,,,,,xoKTGhXeSyqH4fQ23YFAEg,hiLFgg7iSPG97EMcDUYwZw,,,N,0,0,,,2014-02-17 15:27,2014-03-01 17:08,admin,admin,
783,128426,6764,35455,6640,0,N,N,N,CP_Drtn,TT_Task,DT_FixedDrtn,TK_NotStart,HHI.3088,Drain Water from Tank & Transfer to other Tank,,1630,0,30,0,420.48,420.48,30,69.12,0,69.12,,,,2015-01-06 16:00,2015-01-10 16:00,,2014-06-17 07:00,2014-06-19 17:00,2014-06-17 07:00,2014-06-19 17:00,2014-06-17 07:00,2014-06-19 17:00,2015-01-06 16:00,2015-01-10 16:00,,PT_Normal,,,,,RcVu4U4PSaGAdwd5lpd4ww,i4hC2p/uR9Coz5h5HDJvPA,,,N,0,0,,,2014-02-17 15:27,2014-03-01 17:08,admin,admin,
784,128427,6764,35455,6640,0,N,N,N,CP_Drtn,TT_Task,DT_FixedDrtn,TK_NotStart,HHI.3090,Quailty Check,,1630,0,10,0,50.666666,50.666666,10,42.666667,0,42.666667,,,,2015-01-13 16:00,2015-01-14 16:00,,2014-06-24 07:00,2014-06-24 17:00,2014-06-24 07:00,2014-06-24 17:00,2014-06-24 07:00,2014-06-24 17:00,2015-01-13 16:00,2015-01-14 16:00,,PT_Normal,,,,,EJtCS5IxSYGUKca75ur0Qg,mn4MjdzbSCqgzv5+1Q5APg,,,N,0,0,,,2014-02-17 15:27,2014-03-01 17:08,admin,admin,
785,128428,6764,35455,6640,0,N,N,N,CP_Drtn,TT_Task,DT_FixedDrtn,TK_NotStart,HHI.3089,"Install Mobile Scaffolding ,Internal Tank Cleaning & Dismantling Scaffolding",,1630,0,30,0,73.200001,73.200001,30,85.333334,0,85.333334,,,,2015-01-10 16:00,2015-01-13 16:00,,2014-06-21 07:00,2014-06-23 17:00,2014-06-21 07:00,2014-06-23 17:00,2014-06-21 07:00,2014-06-23 17:00,2015-01-10 16:00,2015-01-13 16:00,,PT_Normal,,,,,Xq+e8Y0cSeOnu64LKBpB3Q,H2vxfraRTZKV7M0+x2QsQw,,,N,0,0,,,2014-02-17 15:27,2014-03-01 17:08,admin,admin,
786,128429,6764,35456,6640,0,N,N,N,CP_Drtn,TT_Task,DT_FixedDrtn,TK_NotStart,HHI.3093,Perform Roof Surface Preparation & Painting,,1630,0,20,0,288,288,20,96,0,96,,,,2015-01-19 16:00,2015-01-21 16:00,,2014-07-01 11:00,2014-07-05 13:00,2014-07-01 11:00,2014-07-05 13:00,2014-07-01 11:00,2014-07-05 13:00,2015-01-19 16:00,2015-01-21 16:00,,PT_Normal,,,,,rLJBi8OvQ/6IfQSFRWzOCw,8lIQEszWTWyhHn1H9K2pZA,,,N,0,0,,,2014-02-17 15:27,2014-03-01 17:08,admin,admin,
787,128430,6764,35456,6640,0,N,N,N,CP_Drtn,TT_Task,DT_FixedDrtn,TK_NotStart,HHI.3092,Perform Shell Surface Preparation & Painting,,1630,0,20,0,280,280,20,80,0,80,,,,2015-01-17 16:00,2015-01-19 16:00,,2014-06-28 09:00,2014-07-01 11:00,2014-06-28 09:00,2014-07-01 11:00,2014-06-28 09:00,2014-07-01 11:00,2015-01-17 16:00,2015-01-19 16:00,,PT_Normal,,,,,DdmVCr0NQL+xdyky24Udww,eCUXkM9PQRmsxXomxbZ0mg,,,N,0,0,,,2014-02-17 15:27,2014-03-01 17:08,admin,admin,
788,128431,6764,35456,6640,0,N,N,N,CP_Drtn,TT_Task,DT_FixedDrtn,TK_NotStart,HHI.3094,Quailty Check,,1630,0,40,0,285.48,285.48,40,351.36,0,351.36,,,,2015-01-17 16:00,2015-01-21 16:00,,2014-06-28 09:00,2014-07-05 13:00,2014-06-28 09:00,2014-07-05 13:00,2014-06-28 09:00,2014-07-05 13:00,2015-01-17 16:00,2015-01-21 16:00,,PT_Normal,,,,,5aLbR4WxTTGawj+G5n6VOw,tTvusFLqTSaxDR/HdpCHWQ,,,N,0,0,,,2014-02-17 15:27,2014-03-01 17:08,admin,admin,
789,128432,6764,35457,6640,0,N,N,N,CP_Drtn,TT_Task,DT_FixedDrtn,TK_NotStart,HHI.3100,Quailty Check (including Holiday Test),,1630,0,110,0,103.009524,103.009524,110,515.04762,0,515.04762,,,,2015-01-21 16:00,2015-02-03 16:00,,2014-07-05 13:00,2014-07-26 15:00,2014-07-05 13:00,2014-07-26 15:00,2014-07-05 13:00,2014-07-26 15:00,2015-01-21 16:00,2015-02-03 16:00,,PT_Normal,,,,,EbUvIfAJQB2EeRnro+Xxrw,/Ya8wZ1IT4O2Y54v95J7OQ,,,N,0,0,,,2014-02-17 15:27,2014-03-01 17:08,admin,admin,
790,128433,6764,35457,6640,0,N,N,N,CP_Drtn,TT_Task,DT_FixedDrtn,TK_NotStart,HHI.3096,Perform Roof Underside Surface Preparation & Painting,,1630,0,30,0,1133.104762,1133.104762,30,206.019048,0,206.019048,,,,2015-01-21 16:00,2015-01-25 16:00,,2014-07-05 13:00,2014-07-10 13:00,2014-07-05 13:00,2014-07-10 13:00,2014-07-05 13:00,2014-07-10 13:00,2015-01-21 16:00,2015-01-25 16:00,,PT_Normal,,,,,eoHYJysQREauIN7kicNxLA,+xvbCV90TziEY0xSVIWBcA,,,N,0,0,,,2014-02-17 15:27,2014-03-01 17:08,admin,admin,
791,128434,6764,35457,6640,0,N,N,N,CP_Drtn,TT_Task,DT_FixedDrtn,TK_NotStart,HHI.3099,Perform Bottom Surface Preparation & Painting,,1630,0,30,0,0,0,30,0,0,0,,,,2015-01-31 16:00,2015-02-03 16:00,,2014-07-21 09:00,2014-07-26 15:00,2014-07-21 09:00,2014-07-26 15:00,2014-07-21 09:00,2014-07-26 15:00,2015-01-31 16:00,2015-02-03 16:00,,PT_Normal,,,,,xZq44PWnQcWHbj7RS77oxg,gvs+9YRw8k2SvcG5xAtYLQ,,,N,0,0,,,2014-02-17 15:27,2014-03-01 17:08,admin,admin,
792,128435,6764,35457,6640,0,N,N,N,CP_Drtn,TT_Task,DT_FixedDrtn,TK_NotStart,HHI.3097,Perform Shell course Surface Preparation & Painting,,1630,0,20,0,0,0,20,0,0,0,,,,2015-01-25 16:00,2015-01-27 16:00,,2014-07-10 13:00,2014-07-14 15:00,2014-07-10 13:00,2014-07-14 15:00,2014-07-10 13:00,2014-07-14 15:00,2015-01-25 16:00,2015-01-27 16:00,,PT_Normal,,,,,Enc2m2b/RICuLcOptRELOw,ijZ1dp/tK0eZ20D+JBP09g,,,N,0,0,,,2014-02-17 15:27,2014-03-01 17:08,admin,admin,
793,128436,6764,35457,6640,0,N,N,N,CP_Drtn,TT_Task,DT_FixedDrtn,TK_NotStart,HHI.3095,Install Scaffoldings,,1640,10,30,0,0,0,30,0,0,0,,,,2015-01-18 16:00,2015-01-21 16:00,,2014-06-28 09:00,2014-07-02 15:00,2014-06-28 09:00,2014-07-02 15:00,2014-06-28 09:00,2014-07-02 15:00,2015-01-18 16:00,2015-01-21 16:00,,PT_Normal,,,,,eofHVls1TT6e1MeLjqn5og,vJCOT90M0UeGfdwvgVjfFw,,,N,0,0,,,2014-02-17 15:27,2014-03-01 17:08,admin,admin,
794,128437,6764,35457,6640,0,N,N,N,CP_Drtn,TT_Task,DT_FixedDrtn,TK_NotStart,HHI.3098,Dismantle Scaffoldings,,1630,0,30,0,0,0,30,0,0,0,,,,2015-01-27 16:00,2015-01-31 16:00,,2014-07-15 09:00,2014-07-20 15:00,2014-07-15 09:00,2014-07-20 15:00,2014-07-15 09:00,2014-07-20 15:00,2015-01-27 16:00,2015-01-31 16:00,,PT_Normal,,,,,8boK6i1+S4uaOhJeWR2KzA,pUaLsMhLi0SY/WVus7Cl3A,,,N,0,0,,,2014-02-17 15:27,2014-03-01 17:08,admin,admin,
795,128438,6764,35458,6640,0,N,N,N,CP_Drtn,TT_Task,DT_FixedDrtn,TK_NotStart,HHI.3091,Install Name Plate Brackets/Attachments on shell Course #1 & Anchor Bolts,,1630,0,20,0,17.066666,17.066666,20,42.666666,0,42.666666,,,,2015-01-14 16:00,2015-01-17 16:00,,2014-06-25 07:00,2014-06-26 17:00,2014-06-25 07:00,2014-06-26 17:00,2014-06-25 07:00,2014-06-26 17:00,2015-01-14 16:00,2015-01-17 16:00,,PT_Normal,,,,,QoThZRUsQWqiAQby8Yumjg,7KgCTbdEQcWybHmN9O12Nw,,,N,0,0,,,2014-02-17 15:27,2014-03-01 17:08,admin,admin,
796,128439,6764,35459,6640,0,N,N,N,CP_Drtn,TT_Task,DT_FixedDrtn,TK_NotStart,JF752.3101,"Install Valves,instruments (Supplied by client)",,1630,0,10,0,0,0,10,0,0,0,,,,2015-02-03 16:00,2015-02-04 16:00,,2014-07-27 09:00,2014-07-30 11:00,2014-07-27 09:00,2014-07-30 11:00,2014-07-27 09:00,2014-07-30 11:00,2015-02-03 16:00,2015-02-04 16:00,,PT_Normal,,,,,2k7AzeXoRYq/MVO7iaGmFQ,giIQjAu3wE6VDgXXy5IQtA,,,N,0,0,,,2014-02-17 15:27,2014-03-01 17:08,admin,admin,
797,128440,6764,35461,6640,0,N,N,N,CP_Drtn,TT_Task,DT_FixedDrtn,TK_NotStart,HHI.3015,Erect & Tack Shell Course # 1 & Install Stagging Brackets,,1630,0,20,0,420,420,20,48,0,48,,,,2014-11-02 16:00,2014-11-04 16:00,,2014-04-13 07:00,2014-04-14 17:00,2014-04-13 07:00,2014-04-14 17:00,2014-04-13 07:00,2014-04-14 17:00,2014-11-02 16:00,2014-11-04 16:00,,PT_Normal,,,,,Pn3wIWqgRciUQXOop4z/HA,s5zhiuSATeqG2jTLPTEhQw,,,N,0,0,,,2014-02-17 15:27,2014-03-01 17:08,admin,admin,
798,128441,6764,35461,6640,0,N,N,N,CP_Drtn,TT_Task,DT_FixedDrtn,TK_NotStart,HHI.3017,Weld Outer Vertical Seam / Install the Stairways support on Shell,,1640,0,10,0,400,400,10,80,0,80,,,,2014-11-04 16:00,2014-11-05 16:00,,2014-04-14 07:00,2014-04-14 17:00,2014-04-14 07:00,2014-04-14 17:00,2014-04-14 07:00,2014-04-14 17:00,2014-11-04 16:00,2014-11-05 16:00,,PT_Normal,,,,,v2RvtOf/Q4+RUjZr66TEoA,pHTagyh0QIuA0TUp0IGvhg,,,N,0,0,,,2014-02-17 15:27,2014-03-01 17:08,admin,admin,
799,128442,6764,35461,6640,0,N,N,N,CP_Drtn,TT_Task,DT_FixedDrtn,TK_NotStart,HHI.3018,"Backgouge,Grinding & NDT Inside Vertical Seam",,1640,0,10,0,90,90,10,33.066667,0,33.066667,,,,2014-11-04 16:00,2014-11-05 16:00,,2014-04-14 07:00,2014-04-14 17:00,2014-04-14 07:00,2014-04-14 17:00,2014-04-14 07:00,2014-04-14 17:00,2014-11-04 16:00,2014-11-05 16:00,,PT_Normal,,,,,eY4SMz1iRwWuDQ+QNQVC2Q,gcuvXhrSRhG+jNLyE8ZpdQ,,,N,0,0,,,2014-02-17 15:27,2014-03-01 17:08,admin,admin,
800,128443,6764,35461,6640,0,N,N,N,CP_Drtn,TT_Task,DT_FixedDrtn,TK_NotStart,HHI.3019,Weld Inside Vertical Seam,,1640,0,10,0,181.333334,181.333334,10,85.333334,0,85.333334,,,,2014-11-05 16:00,2014-11-06 16:00,,2014-04-15 07:00,2014-04-15 17:00,2014-04-15 07:00,2014-04-15 17:00,2014-04-15 07:00,2014-04-15 17:00,2014-11-05 16:00,2014-11-06 16:00,,PT_Normal,,,,,LO8P6a/yQjqOQmhsXWGeEA,xVg/IaTfRimmmOqjCNcvFg,,,N,0,0,,,2014-02-17 15:27,2014-03-01 17:08,admin,admin,
801,128444,6764,35461,6640,0,N,N,N,CP_Drtn,TT_Task,DT_FixedDrtn,TK_NotStart,HHI.3021,"Quailty Check(Visual Inspection & PT,Air Leak Test for Shell Manholes& Nozzles)",,1630,0,50,0,27.111111,27.111111,50,33.066667,0,33.066667,,,,2014-11-02 16:00,2014-11-08 16:00,,2014-04-13 07:00,2014-04-17 17:00,2014-04-13 07:00,2014-04-17 17:00,2014-04-13 07:00,2014-04-17 17:00,2014-11-02 16:00,2014-11-08 16:00,,PT_Normal,,,,,xaxDFeuOSV213D5PR7EIfw,KfRUdINiRHSPJb3Ee1lgiw,,,N,0,0,,,2014-02-17 15:27,2014-03-01 17:08,admin,admin,
802,128445,6764,35461,6640,0,N,N,N,CP_Drtn,TT_Task,DT_FixedDrtn,TK_NotStart,HHI.3016,Fit up/Tack Shell #1 to Annular Plate,,1640,0,10,0,0,0,10,0,0,0,,,,2014-11-04 16:00,2014-11-05 16:00,,2014-04-14 07:00,2014-04-14 17:00,2014-04-14 07:00,2014-04-14 17:00,2014-04-14 07:00,2014-04-14 17:00,2014-11-04 16:00,2014-11-05 16:00,,PT_Normal,,,,,FFrN9uYSSbSXtqNHTkNTag,cFX/3TGDH0OaFBWa611yJA,,,N,0,0,,,2014-02-17 15:27,2014-03-01 17:08,admin,admin,
803,128446,6764,35461,6640,0,N,N,N,CP_Drtn,TT_Task,DT_FixedDrtn,TK_NotStart,HHI.3020,"Fit,Weld for Manhole ,Nozzles on Shell",,1640,10,20,0,0,0,20,0,0,0,,,,2014-11-05 16:00,2014-11-08 16:00,,2014-04-15 07:00,2014-04-16 17:00,2014-04-15 07:00,2014-04-16 17:00,2014-04-15 07:00,2014-04-16 17:00,2014-11-05 16:00,2014-11-08 16:00,,PT_Normal,,,,,t2dyUM5eRnSZilbfgu1OPA,qJpWPpbWVU+rYAyNWohVHg,,,N,0,0,,,2014-02-17 15:27,2014-03-01 17:08,admin,admin,
804,128447,6764,35462,6640,0,N,N,N,CP_Drtn,TT_Task,DT_FixedDrtn,TK_NotStart,HHI.3053,Erect & Tack Shell Course # 5 & Install Stagging Brackets,,1630,0,20,0,380,380,20,48,0,48,,,,2014-11-30 16:00,2014-12-02 16:00,,2014-05-11 07:00,2014-05-12 17:00,2014-05-11 07:00,2014-05-12 17:00,2014-05-11 07:00,2014-05-12 17:00,2014-11-30 16:00,2014-12-02 16:00,,PT_Normal,,,,,EDHObDOtQjqNGsnm7h69bA,AmSfcp/1R7W22HR0+8ewXg,,,N,0,0,,,2014-02-17 15:27,2014-03-01 17:08,admin,admin,
805,128448,6764,35462,6640,0,N,N,N,CP_Drtn,TT_Task,DT_FixedDrtn,TK_NotStart,HHI.3054,Weld Outer Vertical Seam /Install the Stairways support on Shell,,1632,0,10,0,167.111111,167.111111,10,33.066667,0,33.066667,,,,2014-12-02 08:00,2014-12-03 08:00,,2014-05-12 07:00,2014-05-12 17:00,2014-05-12 07:00,2014-05-12 17:00,2014-05-12 07:00,2014-05-12 17:00,2014-12-02 08:00,2014-12-03 08:00,,PT_Normal,,,,,IEzhNNJ9RRmDxlhHtNDxhw,VyW7xQ1cQwaYAmEL0EzI/w,,,N,0,0,,,2014-02-17 15:27,2014-03-01 17:08,admin,admin,
806,128449,6764,35462,6640,0,N,N,N,CP_Drtn,TT_Task,DT_FixedDrtn,TK_NotStart,HHI.3055,Backgouge & NDT Inside Vertical Seam,,1632,0,10,0,90.666666,90.666666,10,42.666666,0,42.666666,,,,2014-12-02 08:00,2014-12-03 08:00,,2014-05-12 07:00,2014-05-12 17:00,2014-05-12 07:00,2014-05-12 17:00,2014-05-12 07:00,2014-05-12 17:00,2014-12-02 08:00,2014-12-03 08:00,,PT_Normal,,,,,IuN0Nh5GS3ypyeG8xscC7w,SRCHG8RyTMCxgVaJ9TD7+g,,,N,0,0,,,2014-02-17 15:27,2014-03-01 17:08,admin,admin,
807,128450,6764,35462,6640,0,N,N,N,CP_Drtn,TT_Task,DT_FixedDrtn,TK_NotStart,HHI.3056,Weld Inside Vertical Seam,,1632,0,10,0,160,160,10,33.066667,0,33.066667,,,,2014-12-03 08:00,2014-12-04 08:00,,2014-05-13 07:00,2014-05-13 17:00,2014-05-13 07:00,2014-05-13 17:00,2014-05-13 07:00,2014-05-13 17:00,2014-12-03 08:00,2014-12-04 08:00,,PT_Normal,,,,,sI20llzwQpiMttbr3r5ybw,XVsddY+1S1ekh/guXtMoFw,,,N,0,0,,,2014-02-17 15:27,2014-03-01 17:08,admin,admin,
808,128451,6764,35462,6640,0,N,N,N,CP_Drtn,TT_Task,DT_FixedDrtn,TK_NotStart,HHI.3057,"""""Weld Outer Horizontal Seam between Shell Course # 4 & 5""""",,1632,0,10,0,320,320,10,85.333334,0,85.333334,,,,2014-12-04 08:00,2014-12-06 08:00,,2014-05-14 07:00,2014-05-14 17:00,2014-05-14 07:00,2014-05-14 17:00,2014-05-14 07:00,2014-05-14 17:00,2014-12-04 08:00,2014-12-06 08:00,,PT_Normal,,,,,iawNjEKMTK6ZV4u4yPuTBA,e166thn5TSap50IwUIyG/w,,,N,0,0,,,2014-02-17 15:27,2014-03-01 17:08,admin,admin,
809,128452,6764,35462,6640,0,N,N,N,CP_Drtn,TT_Task,DT_FixedDrtn,TK_NotStart,HHI.3058,"""""Backgouge & NDT Inside Horizontal Seam between Shell Course# 4 & 5""""",,1632,0,10,0,80,80,10,33.066667,0,33.066667,,,,2014-12-04 08:00,2014-12-06 08:00,,2014-05-14 07:00,2014-05-14 17:00,2014-05-14 07:00,2014-05-14 17:00,2014-05-14 07:00,2014-05-14 17:00,2014-12-04 08:00,2014-12-06 08:00,,PT_Normal,,,,,DXSOLQ9fREKN1+QihHmlfQ,oUkWKMmWTHu3BaifcROXfA,,,N,0,0,,,2014-02-17 15:27,2014-03-01 17:08,admin,admin,
810,128453,6764,35462,6640,0,N,N,N,CP_Drtn,TT_Task,DT_FixedDrtn,TK_NotStart,HHI.3059,"Weld Inner Horizontal Seam between Shell Course # 4 & 5""""",,1632,0,10,0,405.333336,405.333336,10,85.333333,0,85.333333,,,,2014-12-06 08:00,2014-12-07 08:00,,2014-05-15 07:00,2014-05-15 17:00,2014-05-15 07:00,2014-05-15 17:00,2014-05-15 07:00,2014-05-15 17:00,2014-12-06 08:00,2014-12-07 08:00,,PT_Normal,,,,,yJRj0WS5RBefYe35aym0CA,IU10EaLcT0WnsT9eLdmIJw,,,N,0,0,,,2014-02-17 15:27,2014-03-01 17:08,admin,admin,
811,128454,6764,35462,6640,0,N,N,N,CP_Drtn,TT_Task,DT_FixedDrtn,TK_NotStart,HHI.3061,"Quailty Check(Visual Inspection,PT,Air Leak Test for Shell Nozzle))",,1630,0,50,0,27.111111,27.111111,50,33.066667,0,33.066667,,,,2014-11-30 16:00,2014-12-06 16:00,,2014-05-11 07:00,2014-05-15 17:00,2014-05-11 07:00,2014-05-15 17:00,2014-05-11 07:00,2014-05-15 17:00,2014-11-30 16:00,2014-12-06 16:00,,PT_Normal,,,,,PyYZ4YFDRca1POSgTDJsag,mtVZY7oYSfS52SKp31itYQ,,,N,0,0,,,2014-02-17 15:27,2014-03-01 17:08,admin,admin,
812,128455,6764,35462,6640,0,N,N,N,CP_Drtn,TT_Task,DT_FixedDrtn,TK_NotStart,HHI.3060,"Fit,Weld Nozzle on Shell",,1632,2,8,0,0,0,8,0,0,0,,,,2014-12-06 08:00,2014-12-06 16:00,,2014-05-15 07:00,2014-05-15 15:00,2014-05-15 07:00,2014-05-15 15:00,2014-05-15 07:00,2014-05-15 15:00,2014-12-06 08:00,2014-12-06 16:00,,PT_Normal,,,,,TlZC/lXWTOu0VvJVOcD4eg,,,,N,0,0,,,2014-02-17 15:27,2014-03-01 17:08,admin,admin,
813,128456,6764,35463,6640,0,N,N,N,CP_Drtn,TT_Task,DT_FixedDrtn,TK_NotStart,HHI.3034,Perform RT,,1630,0,10,0,0,0,10,0,0,0,,,,2014-11-18 16:00,2014-11-19 16:00,,2014-04-29 07:00,2014-04-29 17:00,2014-04-29 07:00,2014-04-29 17:00,2014-04-29 07:00,2014-04-29 17:00,2014-11-18 16:00,2014-11-19 16:00,,PT_Normal,,,,,q4cGyXqZQB67uqrOLYFiTg,GWmJtkqsBUq0z1uOQfCLww,,,N,0,0,,,2014-02-17 15:27,2014-03-01 17:08,admin,admin,
814,128457,6764,35464,6640,0,N,N,N,CP_Drtn,TT_Task,DT_FixedDrtn,TK_NotStart,HHI.3062,Perform RT,,1630,0,10,0,0,0,10,0,0,0,,,,2014-12-06 16:00,2014-12-07 16:00,,2014-05-17 07:00,2014-05-17 17:00,2014-05-17 07:00,2014-05-17 17:00,2014-05-17 07:00,2014-05-17 17:00,2014-12-06 16:00,2014-12-07 16:00,,PT_Normal,,,,,7FE2I96fRKKngqk4iUFBBg,57QxJzEdjEy1pDYy8+dWuQ,,,N,0,0,,,2014-02-17 15:27,2014-03-01 17:08,admin,admin,
815,128458,6764,35466,6640,0,N,N,N,CP_Drtn,TT_Task,DT_FixedDrtn,TK_NotStart,HHI.3064,Weld Outer Horizontal Seam between Shell Course # 5 & Top Angle,,1630,0,10,0,128,128,10,33.066667,0,33.066667,,,,2014-12-07 16:00,2014-12-08 16:00,,2014-05-18 07:00,2014-05-18 17:00,2014-05-18 07:00,2014-05-18 17:00,2014-05-18 07:00,2014-05-18 17:00,2014-12-07 16:00,2014-12-08 16:00,,PT_Normal,,,,,2EG+8cDdQ4yWY3MjcPdsBQ,JvvGVt45RRCRe/PZV/zULQ,,,N,0,0,,,2014-02-17 15:27,2014-03-01 17:08,admin,admin,
816,128459,6764,35466,6640,0,N,N,N,CP_Drtn,TT_Task,DT_FixedDrtn,TK_NotStart,HHI.3065,"""""Backgouge & NDT Inside Horizontal Seam between Shell Course# 7 & Top Angle",,1630,0,10,0,90,90,10,33.066667,0,33.066667,,,,2014-12-08 16:00,2014-12-09 16:00,,2014-05-19 07:00,2014-05-19 17:00,2014-05-19 07:00,2014-05-19 17:00,2014-05-19 07:00,2014-05-19 17:00,2014-12-08 16:00,2014-12-09 16:00,,PT_Normal,,,,,xxBnpzxPTPC31Pos4yGF8A,1JBzkU6KTAGLZW/N67m4PQ,,,N,0,0,,,2014-02-17 15:27,2014-03-01 17:08,admin,admin,
817,128460,6764,35466,6640,0,N,N,N,CP_Drtn,TT_Task,DT_FixedDrtn,TK_NotStart,HHI.3067,Weld Inner Horizontal Seam between Shell Course # 7 & Top Angle,,1630,0,10,0,191.333334,191.333334,10,33.066667,0,33.066667,,,,2014-12-09 16:00,2014-12-10 16:00,,2014-05-20 07:00,2014-05-20 17:00,2014-05-20 07:00,2014-05-20 17:00,2014-05-20 07:00,2014-05-20 17:00,2014-12-09 16:00,2014-12-10 16:00,,PT_Normal,,,,,UDIieYlVQn+jwY7XSiPz9w,xkyR5i0PQ/mxms0CJVabfg,,,N,0,0,,,2014-02-17 15:27,2014-03-01 17:08,admin,admin,
818,128461,6764,35466,6640,0,N,N,N,CP_Drtn,TT_Task,DT_FixedDrtn,TK_NotStart,HHI.3069,Quailty Check (Visual Inspection),,1630,0,40,0,42.666664,42.666664,40,42.666667,0,42.666667,,,,2014-12-06 16:00,2014-12-10 16:00,,2014-05-17 07:00,2014-05-20 17:00,2014-05-17 07:00,2014-05-20 17:00,2014-05-17 07:00,2014-05-20 17:00,2014-12-06 16:00,2014-12-10 16:00,,PT_Normal,,,,,jdS1rWTWTReC69Zrz1h53A,puuHkI7GSieHTAHzZ+Lr6Q,,,N,0,0,,,2014-02-17 15:27,2014-03-01 17:08,admin,admin,
819,128462,6764,35466,6640,0,N,N,N,CP_Drtn,TT_Task,DT_FixedDrtn,TK_NotStart,HHI.3066,"Fit up,Tack of Gusset Plates to Shell",,1640,10,10,0,341.333337,341.333337,10,17.066667,0,17.066667,,,,2014-12-08 16:00,2014-12-09 16:00,,2014-05-18 07:00,2014-05-18 17:00,2014-05-18 07:00,2014-05-18 17:00,2014-05-18 07:00,2014-05-18 17:00,2014-12-08 16:00,2014-12-09 16:00,,PT_Normal,,,,,xDjL3DaCR/e4pYwVr3eRlQ,WRu6BV2mTceP+d9OQ5RfBA,,,N,0,0,,,2014-02-17 15:27,2014-03-01 17:08,admin,admin,
820,128463,6764,35466,6640,0,N,N,N,CP_Drtn,TT_Task,DT_FixedDrtn,TK_NotStart,HHI.3068,Welding of Gusset Plates,,1630,0,10,0,202.666668,202.666668,10,85.333333,0,85.333333,,,,2014-12-09 16:00,2014-12-10 16:00,,2014-05-20 07:00,2014-05-20 17:00,2014-05-20 07:00,2014-05-20 17:00,2014-05-20 07:00,2014-05-20 17:00,2014-12-09 16:00,2014-12-10 16:00,,PT_Normal,,,,,QhPIA1dXQtqqjfXyp0yLuA,Lx6/tZJQQuqoYcNDllu+pg,,,N,0,0,,,2014-02-17 15:27,2014-03-01 17:08,admin,admin,
821,128464,6764,35466,6640,0,N,N,N,CP_Drtn,TT_Task,DT_FixedDrtn,TK_NotStart,HHI.3063,"Fit & Tack 
Shell Course #5 & Top Angle",,1630,0,10,0,255.999999,255.999999,10,8.533333,0,8.533333,,,,2014-12-06 16:00,2014-12-07 16:00,,2014-05-17 07:00,2014-05-17 17:00,2014-05-17 07:00,2014-05-17 17:00,2014-05-17 07:00,2014-05-17 17:00,2014-12-06 16:00,2014-12-07 16:00,,PT_Normal,,,,,4qSLcefgRumELSplPVMseA,4fRUXfheRh2bqNGfeOIUtA,,,N,0,0,,,2014-02-17 15:27,2014-03-01 17:08,admin,admin,
822,128465,6764,35467,6640,0,N,N,N,CP_Drtn,TT_Task,DT_FixedDrtn,TK_NotStart,HHI.3071,Erect & Install Rafters to Gusset Plates /Install Internal Piping Brackets/Piping,,1630,0,30,0,1343.999994,1343.999994,30,17.066666,0,17.066666,,,,2014-12-09 16:00,2014-12-13 16:00,,2014-05-20 07:00,2014-05-22 17:00,2014-05-20 07:00,2014-05-22 17:00,2014-05-20 07:00,2014-05-22 17:00,2014-12-09 16:00,2014-12-13 16:00,,PT_Normal,,,,,+1gm28Z8RGW2J5pepAv4YA,kWd0PmqKTkONau9xeEp5/Q,,,N,0,0,,,2014-02-17 15:27,2014-03-01 17:08,admin,admin,
823,128466,6764,35467,6640,0,N,N,N,CP_Drtn,TT_Task,DT_FixedDrtn,TK_NotStart,HHI.3070,Assembly of Center Ring with Rafters & Purlins,,1630,0,20,0,0,0,20,0,0,0,,,,2014-12-08 16:00,2014-12-10 16:00,,2014-05-19 07:00,2014-05-20 17:00,2014-05-19 07:00,2014-05-20 17:00,2014-05-19 07:00,2014-05-20 17:00,2014-12-08 16:00,2014-12-10 16:00,,PT_Normal,,,,,rfbm3tmHSSuOlyIxWkFU3g,,,,N,0,0,,,2014-02-17 15:27,2014-03-01 17:08,admin,admin,
824,128467,6764,35468,6640,0,N,N,N,CP_Drtn,TT_Task,DT_FixedDrtn,TK_NotStart,HHI.3072,Prepare/Lay Down Roof Plates (6 Plates),,1630,0,10,0,864.000004,864.000004,10,17.066667,0,17.066667,,,,2014-12-13 16:00,2014-12-14 16:00,,2014-05-24 07:00,2014-05-24 17:00,2014-05-24 07:00,2014-05-24 17:00,2014-05-24 07:00,2014-05-24 17:00,2014-12-13 16:00,2014-12-14 16:00,,PT_Normal,,,,,EyEZ4yw7Qy2JHjtjfnlZtg,yaug2E1oTX++PxDKXpPz/g,,,N,0,0,,,2014-02-17 15:27,2014-03-01 17:08,admin,admin,
825,128468,6764,35468,6640,0,N,N,N,CP_Drtn,TT_Task,DT_FixedDrtn,TK_NotStart,HHI.3073,Tacking of Roof Plates,,1630,0,10,0,968,968,10,0,0,0,,,,2014-12-13 16:00,2014-12-14 16:00,,2014-05-24 07:00,2014-05-24 17:00,2014-05-24 07:00,2014-05-24 17:00,2014-05-24 07:00,2014-05-24 17:00,2014-12-13 16:00,2014-12-14 16:00,,PT_Normal,,,,,bZRtZE0oQuqAnCBABFyEMQ,nU6ntAuDTyGQEMg77FJ+wA,,,N,0,0,,,2014-02-17 15:27,2014-03-01 17:08,admin,admin,
826,128469,6764,35468,6640,0,N,N,N,CP_Drtn,TT_Task,DT_FixedDrtn,TK_NotStart,HHI.3074,Welding of Roof Plates (Short Seams),,1630,0,10,0,544,544,10,128,0,128,,,,2014-12-15 16:00,2014-12-16 16:00,,2014-05-26 07:00,2014-05-26 17:00,2014-05-26 07:00,2014-05-26 17:00,2014-05-26 07:00,2014-05-26 17:00,2014-12-15 16:00,2014-12-16 16:00,,PT_Normal,,,,,Xg0uG2hqQY6Jzp9b4SaNYQ,lOaPZbaGRNm99bKlOQtD1w,,,N,0,0,,,2014-02-17 15:27,2014-03-01 17:08,admin,admin,
827,128470,6764,35468,6640,0,N,N,N,CP_Drtn,TT_Task,DT_FixedDrtn,TK_NotStart,HHI.3075,Welding of Roof Plates (Long Seams),,1630,0,20,0,1728.000001,1728.000001,20,249.6,0,249.6,,,,2014-12-15 16:00,2014-12-17 16:00,,2014-05-26 07:00,2014-05-27 17:00,2014-05-26 07:00,2014-05-27 17:00,2014-05-26 07:00,2014-05-27 17:00,2014-12-15 16:00,2014-12-17 16:00,,PT_Normal,,,,,hdqCX78TRZ2+9slGyKcs0A,cwQbwNuoTLeV1nYINHd/XQ,,,N,0,0,,,2014-02-17 15:27,2014-03-01 17:08,admin,admin,
828,128471,6764,35468,6640,0,N,N,N,CP_Drtn,TT_Task,DT_FixedDrtn,TK_NotStart,HHI.3076,Tack of Roof Plates to Curb Angle,,1650,20,10,0,416,416,10,0,0,0,,,,2014-12-16 16:00,2014-12-17 16:00,,2014-05-25 07:00,2014-05-25 17:00,2014-05-25 07:00,2014-05-25 17:00,2014-05-25 07:00,2014-05-25 17:00,2014-12-16 16:00,2014-12-17 16:00,,PT_Normal,,,,,MgjT8V7iRgKzluKvJeZEwA,Vz+NMYIsQ8OC+OuHlrH5Qg,,,N,0,0,,,2014-02-17 15:27,2014-03-01 17:08,admin,admin,
829,128472,6764,35468,6640,0,N,N,N,CP_Drtn,TT_Task,DT_FixedDrtn,TK_NotStart,HHI.3077,Welding of Roof Plates to Top Angle,,1630,0,10,0,608.000003,608.000003,10,85.333333,0,85.333333,,,,2014-12-17 16:00,2014-12-18 16:00,,2014-05-28 07:00,2014-05-28 17:00,2014-05-28 07:00,2014-05-28 17:00,2014-05-28 07:00,2014-05-28 17:00,2014-12-17 16:00,2014-12-18 16:00,,PT_Normal,,,,,/psMFkauRFykq964E0Md1w,Tiub6DMKT7qcCORrGs6Naw,,,N,0,0,,,2014-02-17 15:27,2014-03-01 17:08,admin,admin,
830,128473,6764,35468,6640,0,N,N,N,CP_Drtn,TT_Task,DT_FixedDrtn,TK_NotStart,HHI.3080,"Quailty Check (Visual Inspection& Vaccum Box Test,PT,Air Leak Test for Roof Manholes& Nozzles))",,1630,0,80,0,27.111111,27.111111,80,33.066667,0,33.066667,,,,2014-12-13 16:00,2014-12-22 16:00,,2014-05-24 07:00,2014-06-01 17:00,2014-05-24 07:00,2014-06-01 17:00,2014-05-24 07:00,2014-06-01 17:00,2014-12-13 16:00,2014-12-22 16:00,,PT_Normal,,,,,de8MS6QFToiRmp7Gt2dIAg,UKV7MRaKQD+PPWimBFGXsQ,,,N,0,0,,,2014-02-17 15:27,2014-03-01 17:08,admin,admin,
831,128474,6764,35468,6640,0,N,N,N,CP_Drtn,TT_Task,DT_FixedDrtn,TK_NotStart,HHI.3078,"Fit,Weld Manholes ,Nozzles on Roof /install Top Platform Supports on Roof",,1630,0,20,0,0,0,20,0,0,0,,,,2014-12-20 16:00,2014-12-22 16:00,,2014-05-31 07:00,2014-06-01 17:00,2014-05-31 07:00,2014-06-01 17:00,2014-05-31 07:00,2014-06-01 17:00,2014-12-20 16:00,2014-12-22 16:00,,PT_Normal,,,,,R2mIiy0CRt2iGyTeyNVtRw,kwVagvVoZ0mZIAWkn3VOig,,,N,0,0,,,2014-02-17 15:27,2014-03-01 17:08,admin,admin,
832,128475,6764,35468,6640,0,N,N,N,CP_Drtn,TT_Task,DT_FixedDrtn,TK_NotStart,HHI.3079,Weld Internal Piping to Nozzle N1,,1630,0,10,0,0,0,10,0,0,0,,,,2014-12-21 16:00,2014-12-22 16:00,,2014-06-01 07:00,2014-06-01 17:00,2014-06-01 07:00,2014-06-01 17:00,2014-06-01 07:00,2014-06-01 17:00,2014-12-21 16:00,2014-12-22 16:00,,PT_Normal,,,,,vJ5icOpvQJ6V9S5HxXsobQ,PF9Bglt11Eu6z+CjIhFQ9w,,,N,0,0,,,2014-02-17 15:27,2014-03-01 17:08,admin,admin,
833,128476,6764,35469,6640,0,N,N,N,CP_Drtn,TT_Task,DT_FixedDrtn,TK_NotStart,HHI.3081,Erect & Install Stairways & Platforms for Shell,,1630,0,20,0,341.333337,341.333337,20,17.066667,0,17.066667,,,,2014-12-22 16:00,2014-12-24 16:00,,2014-06-02 07:00,2014-06-03 17:00,2014-06-02 07:00,2014-06-03 17:00,2014-06-02 07:00,2014-06-03 17:00,2014-12-22 16:00,2014-12-24 16:00,,PT_Normal,,,,,q5IsUnIQQ42jYU2b86bl2g,8luPrszbRvCO9llbnOtarw,,,N,0,0,,,2014-02-17 15:27,2014-03-01 17:08,admin,admin,
834,128477,6764,35469,6640,0,N,N,N,CP_Drtn,TT_Task,DT_FixedDrtn,TK_NotStart,HHI.3082,Erect & Install Stairways & Platforms & Handrails for Roof,,1630,0,20,0,341.333337,341.333337,20,17.066667,0,17.066667,,,,2014-12-24 16:00,2014-12-27 16:00,,2014-06-04 07:00,2014-06-05 17:00,2014-06-04 07:00,2014-06-05 17:00,2014-06-04 07:00,2014-06-05 17:00,2014-12-24 16:00,2014-12-27 16:00,,PT_Normal,,,,,6/fVjv/pQzeQBONjGaU61g,JC++5UrkQX+zfYQ2erpMKw,,,N,0,0,,,2014-02-17 15:27,2014-03-01 17:08,admin,admin,
835,128478,6764,35469,6640,0,N,N,N,CP_Drtn,TT_Task,DT_FixedDrtn,TK_NotStart,HHI.3083,Quality Check,,1630,0,10,0,0,0,10,0,0,0,,,,2014-12-27 16:00,2014-12-28 16:00,,2014-06-07 07:00,2014-06-07 17:00,2014-06-07 07:00,2014-06-07 17:00,2014-06-07 07:00,2014-06-07 17:00,2014-12-27 16:00,2014-12-28 16:00,,PT_Normal,,,,,ZOtZ816XTWKE5+4/T3h/4A,PP9WkB+s00WruaxVYjqKcA,,,N,0,0,,,2014-02-17 15:27,2014-03-01 17:08,admin,admin,
836,128479,6764,35470,6640,0,N,N,N,CP_Drtn,TT_Task,DT_FixedDrtn,TK_NotStart,HHI.3007,Prepare & Lay Down Bottom Plates,,1630,0,10,0,347.999998,347.999998,10,25.6,0,25.6,,,,2014-10-26 16:00,2014-10-27 16:00,,2014-04-06 07:00,2014-04-06 17:00,2014-04-06 07:00,2014-04-06 17:00,2014-04-06 07:00,2014-04-06 17:00,2014-10-26 16:00,2014-10-27 16:00,,PT_Normal,,,,,fwgSq/0pQGK/FhU+fG+ERQ,cSuqDDb+QJmAnEmAz7DsJA,,,N,0,0,,,2014-02-17 15:27,2014-03-01 17:08,admin,admin,
837,128480,6764,35470,6640,0,N,N,N,CP_Drtn,TT_Task,DT_FixedDrtn,TK_NotStart,HHI.3014,Quailty Check (Visual Inspection& Vaccum Box Test),,1630,0,60,0,21.333334,21.333334,60,42.666666,0,42.666666,,,,2014-10-26 16:00,2014-11-02 16:00,,2014-04-06 07:00,2014-04-12 17:00,2014-04-06 07:00,2014-04-12 17:00,2014-04-06 07:00,2014-04-12 17:00,2014-10-26 16:00,2014-11-02 16:00,,PT_Normal,,,,,95o54kBWSWigAOZGY5z5yw,XZOJUaRwRAK6ogOg9ogpWA,,,N,0,0,,,2014-02-17 15:27,2014-03-01 17:08,admin,admin,
838,128481,6764,35470,6640,0,N,N,N,CP_Drtn,TT_Task,DT_FixedDrtn,TK_NotStart,HHI.3011,"Erect,Fitup of Sump",,1640,10,10,0,51.999998,51.999998,10,42.666666,0,42.666666,,,,2014-10-30 16:00,2014-11-01 16:00,,2014-04-09 07:00,2014-04-09 17:00,2014-04-09 07:00,2014-04-09 17:00,2014-04-09 07:00,2014-04-09 17:00,2014-10-30 16:00,2014-11-01 16:00,,PT_Normal,,,,,vTtShL6xTgaehsR0gP+4NA,azLvu2U/T7yLYVzFoh2CDg,,,N,0,0,,,2014-02-17 15:27,2014-03-01 17:08,admin,admin,
839,128482,6764,35470,6640,0,N,N,N,CP_Drtn,TT_Task,DT_FixedDrtn,TK_NotStart,HHI.3013,Weld Sump,,1630,0,10,0,17.066666,17.066666,10,42.666666,0,42.666666,,,,2014-11-01 16:00,2014-11-02 16:00,,2014-04-12 07:00,2014-04-12 17:00,2014-04-12 07:00,2014-04-12 17:00,2014-04-12 07:00,2014-04-12 17:00,2014-11-01 16:00,2014-11-02 16:00,,PT_Normal,,,,,myyhbAlKQUSTd0haY5gPoQ,SqxN3XVPRMGrmG0HRhHfKQ,,,N,0,0,,,2014-02-17 15:27,2014-03-01 17:08,admin,admin,
840,128483,6764,35470,6640,0,N,N,N,CP_Drtn,TT_Task,DT_FixedDrtn,TK_NotStart,HHI.3008,Fit/Tack Bottom Plates-Short Seams,,1630,0,10,0,0,0,10,0,0,0,,,,2014-10-27 16:00,2014-10-28 16:00,,2014-04-07 07:00,2014-04-07 17:00,2014-04-07 07:00,2014-04-07 17:00,2014-04-07 07:00,2014-04-07 17:00,2014-10-27 16:00,2014-10-28 16:00,,PT_Normal,,,,,/CwlJ8D5SWGaZbXtbfkZ7Q,uhkdYaWUx0+umBsFw9lChQ,,,N,0,0,,,2014-02-17 15:27,2014-03-01 17:08,admin,admin,
841,128484,6764,35470,6640,0,N,N,N,CP_Drtn,TT_Task,DT_FixedDrtn,TK_NotStart,HHI.3009,Weld Short Seams,,1630,0,10,0,0,0,10,0,0,0,,,,2014-10-28 16:00,2014-10-29 16:00,,2014-04-08 07:00,2014-04-08 17:00,2014-04-08 07:00,2014-04-08 17:00,2014-04-08 07:00,2014-04-08 17:00,2014-10-28 16:00,2014-10-29 16:00,,PT_Normal,,,,,R/5IzP9MTXOSZ7MlNuYidg,+WnS43UkRUOt/DhBTcv3Hw,,,N,0,0,,,2014-02-17 15:27,2014-03-01 17:08,admin,admin,
842,128485,6764,35470,6640,0,N,N,N,CP_Drtn,TT_Task,DT_FixedDrtn,TK_NotStart,HHI.3010,Fit/Tack Bottom Plates-Long Seams,,1630,0,10,0,0,0,10,0,0,0,,,,2014-10-28 16:00,2014-10-29 16:00,,2014-04-08 07:00,2014-04-08 17:00,2014-04-08 07:00,2014-04-08 17:00,2014-04-08 07:00,2014-04-08 17:00,2014-10-28 16:00,2014-10-29 16:00,,PT_Normal,,,,,lrSiwMaGROyzOyvpvjh2IA,YK2VI0eP302gnVkOZh9TDA,,,N,0,0,,,2014-02-17 15:27,2014-03-01 17:08,admin,admin,
843,128486,6764,35470,6640,0,N,N,N,CP_Drtn,TT_Task,DT_FixedDrtn,TK_NotStart,HHI.3012,Weld Long Seams,,1630,0,20,0,0,0,20,0,0,0,,,,2014-10-30 16:00,2014-11-02 16:00,,2014-04-10 07:00,2014-04-12 17:00,2014-04-10 07:00,2014-04-12 17:00,2014-04-10 07:00,2014-04-12 17:00,2014-10-30 16:00,2014-11-02 16:00,,PT_Normal,,,,,3Q+Ydhv/QYON7lWulgY4vg,AsgK1LnCDEKHVNCBxqz+EA,,,N,0,0,,,2014-02-17 15:27,2014-03-01 17:08,admin,admin,
844,128487,6764,35471,6640,0,N,N,N,CP_Drtn,TT_Task,DT_FixedDrtn,TK_NotStart,HHI.3024,Weld Outer Vertical Seam /Install the Stairways support on Shell,,1630,0,10,0,384.000002,384.000002,10,85.333333,0,85.333333,,,,2014-11-09 16:00,2014-11-10 16:00,,2014-04-20 07:00,2014-04-20 17:00,2014-04-20 07:00,2014-04-20 17:00,2014-04-20 07:00,2014-04-20 17:00,2014-11-09 16:00,2014-11-10 16:00,,PT_Normal,,,,,zm3UaPuKTxuBo/ddoO+ILw,WdSX8h6yTQqe1/hl2V+lcA,,,N,0,0,,,2014-02-17 15:27,2014-03-01 17:08,admin,admin,
845,128488,6764,35471,6640,0,N,N,N,CP_Drtn,TT_Task,DT_FixedDrtn,TK_NotStart,HHI.3025,"Backgouge,Grinding & NDT Inside Vertical Seam",,1630,0,10,0,101.333333,101.333333,10,33.066667,0,33.066667,,,,2014-11-09 16:00,2014-11-10 16:00,,2014-04-20 07:00,2014-04-20 17:00,2014-04-20 07:00,2014-04-20 17:00,2014-04-20 07:00,2014-04-20 17:00,2014-11-09 16:00,2014-11-10 16:00,,PT_Normal,,,,,JLTaLWtITxqvFj+JWjhfrw,A5OZqoRhT82pbNbnwnKb4A,,,N,0,0,,,2014-02-17 15:27,2014-03-01 17:08,admin,admin,
846,128489,6764,35471,6640,0,N,N,N,CP_Drtn,TT_Task,DT_FixedDrtn,TK_NotStart,HHI.3026,Weld Inside Vertical Seam,,1630,0,10,0,202.666668,202.666668,10,85.333333,0,85.333333,,,,2014-11-10 16:00,2014-11-11 16:00,,2014-04-21 07:00,2014-04-21 17:00,2014-04-21 07:00,2014-04-21 17:00,2014-04-21 07:00,2014-04-21 17:00,2014-11-10 16:00,2014-11-11 16:00,,PT_Normal,,,,,/1XPmoC3TNGtCBw5gPfjIQ,h0+iKTxZTUKGnnF2vbxz9w,,,N,0,0,,,2014-02-17 15:27,2014-03-01 17:08,admin,admin,
847,128490,6764,35471,6640,0,N,N,N,CP_Drtn,TT_Task,DT_FixedDrtn,TK_NotStart,HHI.3027,"""""Weld Outer Horizontal Seam between Shell Course # 1 & 2""""",,1630,0,10,0,608,608,10,166.4,0,166.4,,,,2014-11-11 16:00,2014-11-12 16:00,,2014-04-22 07:00,2014-04-22 17:00,2014-04-22 07:00,2014-04-22 17:00,2014-04-22 07:00,2014-04-22 17:00,2014-11-11 16:00,2014-11-12 16:00,,PT_Normal,,,,,vvBird2JRj2i7YteeI3u7A,06rvLb3xTIqifYvuihqdRw,,,N,0,0,,,2014-02-17 15:27,2014-03-01 17:08,admin,admin,
848,128491,6764,35471,6640,0,N,N,N,CP_Drtn,TT_Task,DT_FixedDrtn,TK_NotStart,HHI.3028,"""""Backgouge & NDT Inside Horizontal Seam between Shell Course# 1 & 2""""",,1630,0,10,0,122.666668,122.666668,10,85.333333,0,85.333333,,,,2014-11-11 16:00,2014-11-12 16:00,,2014-04-22 07:00,2014-04-22 17:00,2014-04-22 07:00,2014-04-22 17:00,2014-04-22 07:00,2014-04-22 17:00,2014-11-11 16:00,2014-11-12 16:00,,PT_Normal,,,,,nynT9kRiS+qOdF+gLRBytw,HmrJubckRv6zGqwx33uYGg,,,N,0,0,,,2014-02-17 15:27,2014-03-01 17:08,admin,admin,
849,128492,6764,35471,6640,0,N,N,N,CP_Drtn,TT_Task,DT_FixedDrtn,TK_NotStart,HHI.3029,"Weld Inner Horizontal Seam between Shell Course # 1 & 2""""",,1630,0,10,0,608,608,10,166.4,0,166.4,,,,2014-11-12 16:00,2014-11-13 16:00,,2014-04-23 07:00,2014-04-23 17:00,2014-04-23 07:00,2014-04-23 17:00,2014-04-23 07:00,2014-04-23 17:00,2014-11-12 16:00,2014-11-13 16:00,,PT_Normal,,,,,Xj0zLuVvRs+SX4Uozt0/TQ,V5ynLFowSuuH7dy6Cy40LA,,,N,0,0,,,2014-02-17 15:27,2014-03-01 17:08,admin,admin,
850,128493,6764,35471,6640,0,N,N,N,CP_Drtn,TT_Task,DT_FixedDrtn,TK_NotStart,HHI.3030,Weld Shell Course# 1 to Annular Plate (from inside),,1630,0,10,0,405.333336,405.333336,10,85.333333,0,85.333333,,,,2014-11-13 16:00,2014-11-15 16:00,,2014-04-24 07:00,2014-04-24 17:00,2014-04-24 07:00,2014-04-24 17:00,2014-04-24 07:00,2014-04-24 17:00,2014-11-13 16:00,2014-11-15 16:00,,PT_Normal,,,,,hlRmmSULQx6MmvfjyNSpwA,Ky1BBrIxR0mqt1QWto19ww,,,N,0,0,,,2014-02-17 15:27,2014-03-01 17:08,admin,admin,
851,128494,6764,35471,6640,0,N,N,N,CP_Drtn,TT_Task,DT_FixedDrtn,TK_NotStart,HHI.3031,"Perform PT from inside,Complete the welding from outside & Perform Vaccum Box Testing",,1630,0,20,0,426.666665,426.666665,20,128,0,128,,,,2014-11-15 16:00,2014-11-17 16:00,,2014-04-26 07:00,2014-04-27 17:00,2014-04-26 07:00,2014-04-27 17:00,2014-04-26 07:00,2014-04-27 17:00,2014-11-15 16:00,2014-11-17 16:00,,PT_Normal,,,,,yG/UM4PNTA2+XpK4fr5fDQ,ZC3nA+5NQAid87LNziXj4Q,,,N,0,0,,,2014-02-17 15:27,2014-03-01 17:08,admin,admin,
852,128495,6764,35471,6640,0,N,N,N,CP_Drtn,TT_Task,DT_FixedDrtn,TK_NotStart,HHI.3033,Quailty Check(Visual Inspection),,1630,0,90,0,27.111111,27.111111,90,33.066667,0,33.066667,,,,2014-11-08 16:00,2014-11-18 16:00,,2014-04-19 07:00,2014-04-28 17:00,2014-04-19 07:00,2014-04-28 17:00,2014-04-19 07:00,2014-04-28 17:00,2014-11-08 16:00,2014-11-18 16:00,,PT_Normal,,,,,v/7tqDrfT/umSeMxq5IBXg,sMzzmi0fRz6dJbORhn/m8g,,,N,0,0,,,2014-02-17 15:27,2014-03-01 17:08,admin,admin,
853,128496,6764,35471,6640,0,N,N,N,CP_Drtn,TT_Task,DT_FixedDrtn,TK_NotStart,HHI.3023,Erect & Tack Shell Course # 2 & Install Stagging Brackets,,1630,0,20,0,272,272,20,32,0,32,,,,2014-11-08 16:00,2014-11-10 16:00,,2014-04-19 07:00,2014-04-20 17:00,2014-04-19 07:00,2014-04-20 17:00,2014-04-19 07:00,2014-04-20 17:00,2014-11-08 16:00,2014-11-10 16:00,,PT_Normal,,,,,gj8RRs6ISgi+NUykv6rGsQ,qnNfoX3NRpal3qf8f6i3gg,,,N,0,0,,,2014-02-17 15:27,2014-03-01 17:08,admin,admin,
854,128497,6764,35471,6640,0,N,N,N,CP_Drtn,TT_Task,DT_FixedDrtn,TK_NotStart,HHI.3032,Weld Bottom Plates to Annular Plate,,1630,0,10,0,0,0,10,0,0,0,,,,2014-11-17 16:00,2014-11-18 16:00,,2014-04-28 07:00,2014-04-28 17:00,2014-04-28 07:00,2014-04-28 17:00,2014-04-28 07:00,2014-04-28 17:00,2014-11-17 16:00,2014-11-18 16:00,,PT_Normal,,,,,UiTs9stOR3OLfvIMhjdFfg,JwH6padSlEeKXthXTKa7lw,,,N,0,0,,,2014-02-17 15:27,2014-03-01 17:08,admin,admin,
855,128498,6764,35472,6640,0,N,N,N,CP_Drtn,TT_Task,DT_FixedDrtn,TK_NotStart,HHI.3044,Erect & Tack Shell Course # 4 & Install Stagging Brackets,,1630,0,20,0,480,480,20,48,0,48,,,,2014-11-24 16:00,2014-11-26 16:00,,2014-05-05 07:00,2014-05-06 17:00,2014-05-05 07:00,2014-05-06 17:00,2014-05-05 07:00,2014-05-06 17:00,2014-11-24 16:00,2014-11-26 16:00,,PT_Normal,,,,,opWSwQtQQd26vBBnXYZLnQ,vYNQ4nt7Rjq0KyUH4ACYUQ,,,N,0,0,,,2014-02-17 15:27,2014-03-01 17:08,admin,admin,
856,128499,6764,35472,6640,0,N,N,N,CP_Drtn,TT_Task,DT_FixedDrtn,TK_NotStart,HHI.3045,Weld Outer Vertical Seam /Install the Stairways support on Shell,,1630,0,10,0,160,160,10,85.333334,0,85.333334,,,,2014-11-25 16:00,2014-11-26 16:00,,2014-05-06 07:00,2014-05-06 17:00,2014-05-06 07:00,2014-05-06 17:00,2014-05-06 07:00,2014-05-06 17:00,2014-11-25 16:00,2014-11-26 16:00,,PT_Normal,,,,,7CXlFqF/Rh6lSFaZpFB2Sg,zM0ry8s4TcSpKrBwurgq8Q,,,N,0,0,,,2014-02-17 15:27,2014-03-01 17:08,admin,admin,
857,128500,6764,35472,6640,0,N,N,N,CP_Drtn,TT_Task,DT_FixedDrtn,TK_NotStart,HHI.3046,Backgouge & NDT Inside Vertical Seam,,1630,0,10,0,80,80,10,33.066667,0,33.066667,,,,2014-11-25 16:00,2014-11-26 16:00,,2014-05-06 07:00,2014-05-06 17:00,2014-05-06 07:00,2014-05-06 17:00,2014-05-06 07:00,2014-05-06 17:00,2014-11-25 16:00,2014-11-26 16:00,,PT_Normal,,,,,B2dGuyjoS3WiYlUG7y6Wfw,8XZPDLNHTB6oPxonUstkxQ,,,N,0,0,,,2014-02-17 15:27,2014-03-01 17:08,admin,admin,
858,128501,6764,35472,6640,0,N,N,N,CP_Drtn,TT_Task,DT_FixedDrtn,TK_NotStart,HHI.3047,Weld Inside Vertical Seam,,1630,0,10,0,202.666668,202.666668,10,85.333333,0,85.333333,,,,2014-11-26 16:00,2014-11-27 16:00,,2014-05-07 07:00,2014-05-07 17:00,2014-05-07 07:00,2014-05-07 17:00,2014-05-07 07:00,2014-05-07 17:00,2014-11-26 16:00,2014-11-27 16:00,,PT_Normal,,,,,NglrmkX+QMeTk5AXLfb9Ag,/qnSxV5TRI6YTuXiWydigA,,,N,0,0,,,2014-02-17 15:27,2014-03-01 17:08,admin,admin,
859,128502,6764,35472,6640,0,N,N,N,CP_Drtn,TT_Task,DT_FixedDrtn,TK_NotStart,HHI.3048,"Weld Outer Horizontal Seam between Shell Course # 3 & 4""""",,1630,0,10,0,388.266664,388.266664,10,72.96,0,72.96,,,,2014-11-27 16:00,2014-11-29 16:00,,2014-05-08 07:00,2014-05-08 17:00,2014-05-08 07:00,2014-05-08 17:00,2014-05-08 07:00,2014-05-08 17:00,2014-11-27 16:00,2014-11-29 16:00,,PT_Normal,,,,,eoZTm6v/RRmWnP4KivtULw,tNRyVYCbQKeK3AhtrYm9Yw,,,N,0,0,,,2014-02-17 15:27,2014-03-01 17:08,admin,admin,
860,128503,6764,35472,6640,0,N,N,N,CP_Drtn,TT_Task,DT_FixedDrtn,TK_NotStart,HHI.3049,"Backgouge & NDT Inside Horizontal Seam between Shell Course# 3 & 4""""",,1630,0,10,0,101.333333,101.333333,10,33.066667,0,33.066667,,,,2014-11-27 16:00,2014-11-29 16:00,,2014-05-08 07:00,2014-05-08 17:00,2014-05-08 07:00,2014-05-08 17:00,2014-05-08 07:00,2014-05-08 17:00,2014-11-27 16:00,2014-11-29 16:00,,PT_Normal,,,,,E0ijrcEES72CtbHG0KCPHw,r8PHxJ42QhG2mfoRI8tayg,,,N,0,0,,,2014-02-17 15:27,2014-03-01 17:08,admin,admin,
861,128504,6764,35472,6640,0,N,N,N,CP_Drtn,TT_Task,DT_FixedDrtn,TK_NotStart,HHI.3050,"Weld Inner Horizontal Seam between Shell Course # 3 & 4""""",,1630,0,10,0,388.266664,388.266664,10,72.96,0,72.96,,,,2014-11-29 16:00,2014-11-30 16:00,,2014-05-10 07:00,2014-05-10 17:00,2014-05-10 07:00,2014-05-10 17:00,2014-05-10 07:00,2014-05-10 17:00,2014-11-29 16:00,2014-11-30 16:00,,PT_Normal,,,,,9KrvC4o0R4ie5NwTHCQC3A,p1t3yFSARvOHHXiwUSkFgA,,,N,0,0,,,2014-02-17 15:27,2014-03-01 17:08,admin,admin,
862,128505,6764,35472,6640,0,N,N,N,CP_Drtn,TT_Task,DT_FixedDrtn,TK_NotStart,HHI.3051,Quailty Check(Visual Inspection),,1630,0,50,0,34.222222,34.222222,50,33.066667,0,33.066667,,,,2014-11-24 16:00,2014-11-30 16:00,,2014-05-05 07:00,2014-05-10 17:00,2014-05-05 07:00,2014-05-10 17:00,2014-05-05 07:00,2014-05-10 17:00,2014-11-24 16:00,2014-11-30 16:00,,PT_Normal,,,,,gKG8rV1OSq+leMdAn3WiuA,MdcOImQ2Qa63hbEXRuGvTw,,,N,0,0,,,2014-02-17 15:27,2014-03-01 17:08,admin,admin,
863,128506,6764,35473,6640,0,N,N,N,CP_Drtn,TT_Task,DT_FixedDrtn,TK_NotStart,HHI.3006,Perform RT,,1630,0,10,0,0,0,10,0,0,0,,,,2014-10-26 16:00,2014-10-27 16:00,,2014-04-06 07:00,2014-04-06 17:00,2014-04-06 07:00,2014-04-06 17:00,2014-04-06 07:00,2014-04-06 17:00,2014-10-26 16:00,2014-10-27 16:00,,PT_Normal,,,,,Xvq+OtKOT1CgBD/yITQOmQ,jHDIYLCM2Uu+vVJjZVQXMw,,,N,0,0,,,2014-02-17 15:27,2014-03-01 17:08,admin,admin,
864,128507,6764,35474,6640,0,N,N,N,CP_Drtn,TT_Task,DT_FixedDrtn,TK_NotStart,HHI.3084,Mechanical Completion (MCC) & Final Isnpection Before Hydrotesting,,1630,0,10,0,16,16,10,40,0,40,,,,2014-12-28 16:00,2014-12-29 16:00,,2014-06-08 07:00,2014-06-08 17:00,2014-06-08 07:00,2014-06-08 17:00,2014-06-08 07:00,2014-06-08 17:00,2014-12-28 16:00,2014-12-29 16:00,,PT_Normal,,,,,JPBUSXSWToq65tE3PJjYCw,xONAK+hKSFm7ujAE4ajU/g,,,N,0,0,,,2014-02-17 15:27,2014-03-01 17:08,admin,admin,
865,128508,6764,35475,6640,0,N,N,N,CP_Drtn,TT_Task,DT_FixedDrtn,TK_NotStart,HHI.3043,Perform RT,,1630,0,10,0,0,0,10,0,0,0,,,,2014-11-24 16:00,2014-11-25 16:00,,2014-05-05 07:00,2014-05-05 17:00,2014-05-05 07:00,2014-05-05 17:00,2014-05-05 07:00,2014-05-05 17:00,2014-11-24 16:00,2014-11-25 16:00,,PT_Normal,,,,,GEhe89hMQ4KjR+5NMFydDQ,aUP+CvH/Rk+3o/Lzz8hirw,,,N,0,0,,,2014-02-17 15:27,2014-03-01 17:08,admin,admin,
866,128509,6764,35476,6640,0,N,N,N,CP_Drtn,TT_Task,DT_FixedDrtn,TK_NotStart,HHI.3035,Erect & Tack Shell Course # 3 & Install Stagging Brackets,,1630,0,20,0,500,500,20,48,0,48,,,,2014-11-18 16:00,2014-11-20 16:00,,2014-04-29 07:00,2014-04-30 17:00,2014-04-29 07:00,2014-04-30 17:00,2014-04-29 07:00,2014-04-30 17:00,2014-11-18 16:00,2014-11-20 16:00,,PT_Normal,,,,,ZVQp66CeSzKfUmjTu4EopQ,Hz2/2CrFSEyjfCNLFS/qdw,,,N,0,0,,,2014-02-17 15:27,2014-03-01 17:08,admin,admin,
867,128510,6764,35476,6640,0,N,N,N,CP_Drtn,TT_Task,DT_FixedDrtn,TK_NotStart,HHI.3036,Weld Outer Vertical Seam /Install the Stairways support on Shell,,1630,0,10,0,160,160,10,85.333334,0,85.333334,,,,2014-11-19 16:00,2014-11-20 16:00,,2014-04-30 07:00,2014-04-30 17:00,2014-04-30 07:00,2014-04-30 17:00,2014-04-30 07:00,2014-04-30 17:00,2014-11-19 16:00,2014-11-20 16:00,,PT_Normal,,,,,1D2ru7lTQvCS48RhfiNg7w,VxJcE5hBQUaQLsKUyxuEoA,,,N,0,0,,,2014-02-17 15:27,2014-03-01 17:08,admin,admin,
868,128511,6764,35476,6640,0,N,N,N,CP_Drtn,TT_Task,DT_FixedDrtn,TK_NotStart,HHI.3037,Backgouge & NDT Inside Vertical Seam,,1630,0,10,0,80,80,10,33.066667,0,33.066667,,,,2014-11-19 16:00,2014-11-20 16:00,,2014-04-30 07:00,2014-04-30 17:00,2014-04-30 07:00,2014-04-30 17:00,2014-04-30 07:00,2014-04-30 17:00,2014-11-19 16:00,2014-11-20 16:00,,PT_Normal,,,,,bxwT4okuTomWZH6gUPA2bw,aznCFY3aTfaHQJ2QQcPEWg,,,N,0,0,,,2014-02-17 15:27,2014-03-01 17:08,admin,admin,
869,128512,6764,35476,6640,0,N,N,N,CP_Drtn,TT_Task,DT_FixedDrtn,TK_NotStart,HHI.3038,Weld Inside Vertical Seam,,1630,0,10,0,202.666668,202.666668,10,85.333333,0,85.333333,,,,2014-11-20 16:00,2014-11-22 16:00,,2014-05-01 07:00,2014-05-01 17:00,2014-05-01 07:00,2014-05-01 17:00,2014-05-01 07:00,2014-05-01 17:00,2014-11-20 16:00,2014-11-22 16:00,,PT_Normal,,,,,oNGtN1ckRgu+qJg2StVvqA,/4pMBGHgS7qfoA8tArLxJA,,,N,0,0,,,2014-02-17 15:27,2014-03-01 17:08,admin,admin,
870,128513,6764,35476,6640,0,N,N,N,CP_Drtn,TT_Task,DT_FixedDrtn,TK_NotStart,HHI.3039,"Weld Outer Horizontal Seam between Shell Course # 2 & 3""""",,1630,0,10,0,608,608,10,128,0,128,,,,2014-11-22 16:00,2014-11-23 16:00,,2014-05-03 07:00,2014-05-03 17:00,2014-05-03 07:00,2014-05-03 17:00,2014-05-03 07:00,2014-05-03 17:00,2014-11-22 16:00,2014-11-23 16:00,,PT_Normal,,,,,sfTpUfywQ1OnQ/p586Ysng,x/NWNRuSSYSf+GCR2xU9Iw,,,N,0,0,,,2014-02-17 15:27,2014-03-01 17:08,admin,admin,
871,128514,6764,35476,6640,0,N,N,N,CP_Drtn,TT_Task,DT_FixedDrtn,TK_NotStart,HHI.3040,"Backgouge & NDT Inside Horizontal Seam between Shell Course# 2 & 3""""",,1630,0,10,0,87.111111,87.111111,10,33.066667,0,33.066667,,,,2014-11-22 16:00,2014-11-23 16:00,,2014-05-03 07:00,2014-05-03 17:00,2014-05-03 07:00,2014-05-03 17:00,2014-05-03 07:00,2014-05-03 17:00,2014-11-22 16:00,2014-11-23 16:00,,PT_Normal,,,,,ZCm9UuQxTEuDQBsPdRU/Pw,pVoJfkPnTdWxibuJGr32lA,,,N,0,0,,,2014-02-17 15:27,2014-03-01 17:08,admin,admin,
872,128515,6764,35476,6640,0,N,N,N,CP_Drtn,TT_Task,DT_FixedDrtn,TK_NotStart,HHI.3041,"Weld Inner Horizontal Seam between Shell Course # 2 & 3""""",,1630,0,10,0,608,608,10,128,0,128,,,,2014-11-23 16:00,2014-11-24 16:00,,2014-05-04 07:00,2014-05-04 17:00,2014-05-04 07:00,2014-05-04 17:00,2014-05-04 07:00,2014-05-04 17:00,2014-11-23 16:00,2014-11-24 16:00,,PT_Normal,,,,,4jlnIlYIQlu7aKzp6WCnOw,Ris02MCgSLWW7QFKFBmSsQ,,,N,0,0,,,2014-02-17 15:27,2014-03-01 17:08,admin,admin,
873,128516,6764,35476,6640,0,N,N,N,CP_Drtn,TT_Task,DT_FixedDrtn,TK_NotStart,HHI.3042,Quailty Check(Visual Inspection),,1630,0,50,0,27.111111,27.111111,50,33.066667,0,33.066667,,,,2014-11-18 16:00,2014-11-24 16:00,,2014-04-29 07:00,2014-05-04 17:00,2014-04-29 07:00,2014-05-04 17:00,2014-04-29 07:00,2014-05-04 17:00,2014-11-18 16:00,2014-11-24 16:00,,PT_Normal,,,,,b1VGP9yYRmWJQuQUXlNinA,SrrmHBlxS0+XK3Si/7rdfg,,,N,0,0,,,2014-02-17 15:27,2014-03-01 17:08,admin,admin,
874,128517,6764,35477,6640,0,N,N,N,CP_Drtn,TT_Task,DT_FixedDrtn,TK_NotStart,HHI.3052,Perform RT,,1630,0,10,0,0,0,10,0,0,0,,,,2014-11-30 16:00,2014-12-01 16:00,,2014-05-11 07:00,2014-05-11 17:00,2014-05-11 07:00,2014-05-11 17:00,2014-05-11 07:00,2014-05-11 17:00,2014-11-30 16:00,2014-12-01 16:00,,PT_Normal,,,,,Byh1sqGHRgCJCUXZhldggg,/6cai9VLTE2sY94MF15f8w,,,N,0,0,,,2014-02-17 15:27,2014-03-01 17:08,admin,admin,
875,128518,6764,35478,6640,0,N,N,N,CP_Drtn,TT_Task,DT_FixedDrtn,TK_NotStart,HHI.3003,"Install Sealent,Erect & Tack of Annular Plates",,1630,0,10,0,80,80,10,8,0,8,,,,2014-10-23 16:00,2014-10-25 16:00,,2014-04-03 07:00,2014-04-03 17:00,2014-04-03 07:00,2014-04-03 17:00,2014-04-03 07:00,2014-04-03 17:00,2014-10-23 16:00,2014-10-25 16:00,,PT_Normal,,,,,QkJSMI76SWmzE8KO2EZKRA,097QdWX0SSCLEWFVz2DdGA,,,N,0,0,,,2014-02-17 15:27,2014-03-01 17:08,admin,admin,
876,128519,6764,35478,6640,0,N,N,N,CP_Drtn,TT_Task,DT_FixedDrtn,TK_NotStart,HHI.3004,Welding of Annular Plates,,1640,10,10,0,180,180,10,40,0,40,,,,2014-10-25 16:00,2014-10-26 16:00,,2014-04-03 07:00,2014-04-03 17:00,2014-04-03 07:00,2014-04-03 17:00,2014-04-03 07:00,2014-04-03 17:00,2014-10-25 16:00,2014-10-26 16:00,,PT_Normal,,,,,6mG+BlEIT0aPflBfPaDbDg,oHh7lCJTS+iUEFSmdP+I4Q,,,N,0,0,,,2014-02-17 15:27,2014-03-01 17:08,admin,admin,
877,128520,6764,35478,6640,0,N,N,N,CP_Drtn,TT_Task,DT_FixedDrtn,TK_NotStart,HHI.3005,"Quailty Check (Visual Inspection,PT & Vaccum Box Test)",,1630,0,20,0,40,40,20,40,0,40,,,,2014-10-23 16:00,2014-10-26 16:00,,2014-04-03 07:00,2014-04-05 17:00,2014-04-03 07:00,2014-04-05 17:00,2014-04-03 07:00,2014-04-05 17:00,2014-10-23 16:00,2014-10-26 16:00,,PT_Normal,,,,,qyW+uYiqTzGjyH6FLJdFZQ,Cj0h9st1Que0naEhGC31Bg,,,N,0,0,,,2014-02-17 15:27,2014-03-01 17:08,admin,admin,
878,128521,6764,35479,6640,0,N,N,N,CP_Drtn,TT_Task,DT_FixedDrtn,TK_NotStart,HHI.3022,Perform RT,,1630,0,10,0,0,0,10,0,0,0,,,,2014-11-08 16:00,2014-11-09 16:00,,2014-04-19 07:00,2014-04-19 17:00,2014-04-19 07:00,2014-04-19 17:00,2014-04-19 07:00,2014-04-19 17:00,2014-11-08 16:00,2014-11-09 16:00,,PT_Normal,,,,,GZFf12d9RzinXtqJQ8hxPQ,fblkQIEz9UaACAlKeVUFvg,,,N,0,0,,,2014-02-17 15:27,2014-03-01 17:08,admin,admin,
879,128522,6764,35480,6640,0,N,N,N,CP_Drtn,TT_Task,DT_FixedDrtn,TK_NotStart,HHI.3102,Perform Final Inspection & Handover to CLient,,1630,0,10,0,0,0,10,0,0,0,,,,2015-02-04 16:00,2015-02-05 16:00,,2014-07-30 11:00,2014-07-31 11:00,2014-07-30 11:00,2014-07-31 11:00,2014-07-30 11:00,2014-07-31 11:00,2015-02-04 16:00,2015-02-05 16:00,,PT_Normal,,,,,0np1fAtaS12hGj7+60utoQ,SxrzYUiGSE62pBonO0Fv3A,,,N,0,0,,,2014-02-17 15:27,2014-03-01 17:08,admin,admin,
880,128523,6764,35481,6640,0,N,N,N,CP_Drtn,TT_Task,DT_FixedDrtn,TK_NotStart,HHI.3103,AZ Handovers Area to Client,,1630,1630,10,0,0,0,10,0,0,0,,,,2015-02-05 16:00,2015-02-07 16:00,,2014-07-31 11:00,2014-08-01 13:30,2014-07-31 11:00,2014-08-01 13:30,2014-07-31 11:00,2014-08-01 13:30,2015-02-05 16:00,2015-02-07 16:00,,PT_Normal,,,,,bBUO2b+OSUOVw8ToS09Wbg,,,,N,0,0,,,2014-02-17 15:27,2014-03-01 17:08,admin,admin,
