,task_id,proj_id,wbs_id,clndr_id,est_wt,phys_complete_pct,rev_fdbk_flag,lock_plan_flag,auto_compute_act_flag,complete_pct_type,task_type,duration_type,review_type,status_code,task_code,task_name,rsrc_id,total_float_hr_cnt,free_float_hr_cnt,remain_drtn_hr_cnt,act_work_qty,remain_work_qty,target_work_qty,target_drtn_hr_cnt,target_equip_qty,act_equip_qty,remain_equip_qty,cstr_date,act_start_date,act_end_date,late_start_date,late_end_date,expect_end_date,early_start_date,early_end_date,restart_date,reend_date,target_start_date,target_end_date,review_end_date,rem_late_start_date,rem_late_end_date,cstr_type,priority_type,suspend_date,resume_date,float_path,float_path_order,guid,tmpl_guid,cstr_date2,cstr_type2,driving_path_flag,act_this_per_work_qty,act_this_per_equip_qty,external_early_start_date,external_late_end_date,create_date,update_date,create_user,update_user
0,128026,3614,19568,4347,1,0,N,N,N,CP_Drtn,TT_Task,DT_FixedRate,RV_OK,TK_NotStart,A9550,Site Preparation Works,,848,848,112,0,0,0,112,0,0,0,,,,2012-02-15 08:00,2012-03-01 16:00,,2011-10-01 08:00,2011-10-16 16:00,2011-10-01 08:00,2011-10-16 16:00,2011-10-01 08:00,2011-10-16 16:00,,2012-02-15 08:00,2012-03-01 16:00,,PT_Normal,,,,,k9jx+8DtBUGMZSkMGnTULg,4hjnagKyE06V4Ct2a3g1ww,,,N,0,0,,,2012-05-08 14:07,2012-05-08 14:07,admin,admin
1,128027,3614,19565,4347,0,0,N,N,N,CP_Drtn,TT_Mile,DT_FixedDrtn,RV_OK,TK_NotStart,A10920,Project Start,,0,0,0,0,0,0,0,0,0,0,,,,2011-10-01 08:00,2011-10-01 08:00,,2011-10-01 08:00,2011-10-01 08:00,2011-10-01 08:00,2011-10-01 08:00,2011-10-01 08:00,2011-10-01 08:00,,2011-10-01 08:00,2011-10-01 08:00,,PT_Normal,,,,,8LjivEDZyUS+GzXt5HxtxA,,,,Y,0,0,,,2012-05-08 14:07,2012-05-08 14:07,admin,admin
2,128028,3614,19565,4347,0,0,N,N,N,CP_Drtn,TT_FinMile,DT_FixedDrtn,RV_OK,TK_NotStart,A10930,Project Finish,,8,8,0,0,0,0,0,0,0,0,,,,2012-03-01 16:00,2012-03-01 16:00,,2012-02-29 16:00,2012-02-29 16:00,2012-02-29 16:00,2012-02-29 16:00,2012-02-29 16:00,2012-02-29 16:00,,2012-03-01 16:00,2012-03-01 16:00,,PT_Normal,,,,,2c4h5nZlgkG6qVmb5S3ciQ,,,,N,0,0,,,2012-05-08 14:07,2012-05-08 14:07,admin,admin
3,128029,3614,19571,4347,1,0,N,N,N,CP_Drtn,TT_Task,DT_FixedDUR2,RV_OK,TK_NotStart,A10980,Shop Drawing Preparation & Submittal,,0,0,56,0,0,0,56,0,0,0,,,,2011-10-01 08:00,2011-10-08 16:00,,2011-10-01 08:00,2011-10-08 16:00,2011-10-01 08:00,2011-10-08 16:00,2011-10-01 08:00,2011-10-08 16:00,,2011-10-01 08:00,2011-10-08 16:00,,PT_Normal,,,,,ydWN1YuvQ0as4Oz31e2zfg,RaQ9kSiV1k29J6kSs6bdsQ,,,Y,0,0,,,2012-05-08 14:07,2012-05-08 14:07,admin,admin
4,128030,3614,19571,4347,1,0,N,N,N,CP_Drtn,TT_Task,DT_FixedDUR2,RV_OK,TK_NotStart,A10990,Shop Drawing Review & Approval,,0,0,56,0,0,0,56,0,0,0,,,,2011-10-09 08:00,2011-10-16 16:00,,2011-10-09 08:00,2011-10-16 16:00,2011-10-09 08:00,2011-10-16 16:00,2011-10-09 08:00,2011-10-16 16:00,,2011-10-09 08:00,2011-10-16 16:00,,PT_Normal,,,,,qSRvSzpD20Sg9KpCg/1w0w,Cq5h+meLOkuqg1mXHpws+A,,,Y,0,0,,,2012-05-08 14:07,2012-05-08 14:07,admin,admin
5,128031,3614,19572,4347,1,0,N,N,N,CP_Drtn,TT_Task,DT_FixedDUR2,RV_OK,TK_NotStart,A11000,Shop Drawing Preparation & Submittal,,8,0,56,0,0,0,56,0,0,0,,,,2011-10-19 08:00,2011-10-26 16:00,,2011-10-18 08:00,2011-10-25 16:00,2011-10-18 08:00,2011-10-25 16:00,2011-10-18 08:00,2011-10-25 16:00,,2011-10-19 08:00,2011-10-26 16:00,,PT_Normal,,,,,pSUM4Bn+YEikshAlVgPpWg,RQ3zKSivHkuCXXgZsJciqQ,,,N,0,0,,,2012-05-08 14:07,2012-05-08 14:07,admin,admin
6,128032,3614,19572,4347,1,0,N,N,N,CP_Drtn,TT_Task,DT_FixedDUR2,RV_OK,TK_NotStart,A11010,Shop Drawing Review & Approval,,8,0,56,0,0,0,56,0,0,0,,,,2011-10-27 08:00,2011-11-03 16:00,,2011-10-26 08:00,2011-11-02 16:00,2011-10-26 08:00,2011-11-02 16:00,2011-10-26 08:00,2011-11-02 16:00,,2011-10-27 08:00,2011-11-03 16:00,,PT_Normal,,,,,s9xc93NmP0iaw7rj/Vjbdg,pc/pOl5CCkCqxCw7hc6M0g,,,N,0,0,,,2012-05-08 14:07,2012-05-08 14:07,admin,admin
7,128033,3614,19573,4347,1,0,N,N,N,CP_Drtn,TT_Task,DT_FixedRate,RV_OK,TK_NotStart,A11270,Electrical and Mechanical Works,,8,0,720,0,0,0,720,0,0,0,,,,2011-11-19 08:00,2012-03-01 16:00,,2011-11-03 08:00,2012-02-29 16:00,2011-11-03 08:00,2012-02-29 16:00,2011-11-03 08:00,2012-02-29 16:00,,2011-11-19 08:00,2012-03-01 16:00,,PT_Normal,,,,,bwy/Rlt3C0iVCj/SEsXoAQ,Kcq3ELAMIEiz4dYSn9PVEA,,,N,0,0,,,2012-05-08 14:07,2012-05-08 14:07,admin,admin
8,128034,3614,19574,4347,1,0,N,N,N,CP_Drtn,TT_Task,DT_FixedRate,RV_OK,TK_NotStart,A12080,Masonry Works,,32,0,240,0,0,0,240,0,0,0,,,,2011-10-22 08:00,2011-12-08 16:00,,2011-10-17 08:00,2011-12-04 16:00,2011-10-17 08:00,2011-12-04 16:00,2011-10-17 08:00,2011-12-04 16:00,,2011-10-22 08:00,2011-12-08 16:00,,PT_Normal,,,,,ZrgR89orCkmoSaaiN8tX+Q,eKDVQFc/BUe43WhOonrOoA,,,N,0,0,,,2012-05-08 14:07,2012-05-08 14:07,admin,admin
9,128035,3614,19574,4347,1,0,N,N,N,CP_Drtn,TT_Task,DT_FixedRate,RV_OK,TK_NotStart,A12090,Plastering Works,,32,0,240,0,0,0,240,0,0,0,,,,2011-11-22 08:00,2011-12-26 16:00,,2011-11-03 08:00,2011-12-21 16:00,2011-11-03 08:00,2011-12-21 16:00,2011-11-03 08:00,2011-12-21 16:00,,2011-11-22 08:00,2011-12-26 16:00,,PT_Normal,,,,,7IChVU4q3E2Stnqd7zTSJw,TQV48QNO6EuDfCkqM1U8xw,,,N,0,0,,,2012-05-08 14:07,2012-05-08 14:07,admin,admin
10,128036,3614,19574,4347,1,0,N,N,N,CP_Drtn,TT_Task,DT_FixedRate,RV_OK,TK_NotStart,A12120,Ceramic Wall Tiles,,32,0,160,0,0,0,160,0,0,0,,,,2012-01-04 08:00,2012-01-26 16:00,,2011-12-31 08:00,2012-01-22 16:00,2011-12-31 08:00,2012-01-22 16:00,2011-12-31 08:00,2012-01-22 16:00,,2012-01-04 08:00,2012-01-26 16:00,,PT_Normal,,,,,AnTmQruSoUGrOY1gkN5Hfg,2n9tDniqL06jfl7UEpU+HA,,,N,0,0,,,2012-05-08 14:07,2012-05-08 14:07,admin,admin
11,128037,3614,19574,4347,1,0,N,N,N,CP_Drtn,TT_Task,DT_FixedRate,RV_OK,TK_NotStart,A12100,Painting Works,,112,80,240,0,0,0,240,0,0,0,,,,2012-01-16 08:00,2012-02-19 16:00,,2011-12-31 08:00,2012-02-02 16:00,2011-12-31 08:00,2012-02-02 16:00,2011-12-31 08:00,2012-02-02 16:00,,2012-01-16 08:00,2012-02-19 16:00,,PT_Normal,,,,,oA268BJnOkqxyPJzSr7mCw,wL4eVtCsE0+FFNYRSqd5vA,,,N,0,0,,,2012-05-08 14:07,2012-05-08 14:07,admin,admin
12,128038,3614,19574,4347,1,0,N,N,N,CP_Drtn,TT_Task,DT_FixedRate,RV_OK,TK_NotStart,A12130,Ceramic Tiles For Flooring & Skirting,,32,0,160,0,0,0,160,0,0,0,,,,2012-01-28 08:00,2012-02-19 16:00,,2012-01-23 08:00,2012-02-14 16:00,2012-01-23 08:00,2012-02-14 16:00,2012-01-23 08:00,2012-02-14 16:00,,2012-01-28 08:00,2012-02-19 16:00,,PT_Normal,,,,,ytSCtxKi80eJ2xcMPPsJJg,y8joleIGjEuIO9EedmeXAA,,,N,0,0,,,2012-05-08 14:07,2012-05-08 14:07,admin,admin
13,128039,3614,19574,4347,1,0,N,N,N,CP_Drtn,TT_Task,DT_FixedRate,RV_OK,TK_NotStart,A12110,Thermal & Moisture Protection,,32,0,56,0,0,0,56,0,0,0,,,,2011-12-27 08:00,2012-01-03 16:00,,2011-12-22 08:00,2011-12-29 16:00,2011-12-22 08:00,2011-12-29 16:00,2011-12-22 08:00,2011-12-29 16:00,,2011-12-27 08:00,2012-01-03 16:00,,PT_Normal,,,,,ZKFc56b4BUmNcRQzM4iE6Q,M8SxJ7A3hkmGO3NuAOWhSQ,,,N,0,0,,,2012-05-08 14:07,2012-05-08 14:07,admin,admin
14,128040,3614,19574,4347,1,0,N,N,N,CP_Drtn,TT_Task,DT_FixedDUR2,RV_OK,TK_NotStart,A12140,Gypsum Board,,112,0,56,0,0,0,56,0,0,0,,,,2012-01-08 08:00,2012-01-15 16:00,,2011-12-22 08:00,2011-12-29 16:00,2011-12-22 08:00,2011-12-29 16:00,2011-12-22 08:00,2011-12-29 16:00,,2012-01-08 08:00,2012-01-15 16:00,,PT_Normal,,,,,Du3cgF9GokiEt7LKzJF/Yg,,,,N,0,0,,,2012-05-08 14:07,2012-05-08 14:07,admin,admin
15,128041,3614,19574,4347,1,0,N,N,N,CP_Drtn,TT_Task,DT_FixedDUR2,RV_OK,TK_NotStart,A12150,Facades Finishing,,168,136,240,0,0,0,240,0,0,0,,,,2012-01-16 08:00,2012-02-19 16:00,,2011-12-22 08:00,2012-01-25 16:00,2011-12-22 08:00,2012-01-25 16:00,2011-12-22 08:00,2012-01-25 16:00,,2012-01-16 08:00,2012-02-19 16:00,,PT_Normal,,,,,kvAtObZ3MEW7LtiUseO1CA,,,,N,0,0,,,2012-05-08 14:07,2012-05-08 14:07,admin,admin
16,128042,3614,19574,4347,1,0,N,N,N,CP_Drtn,TT_Task,DT_FixedDUR2,RV_OK,TK_NotStart,A12160,Doors & Windows,,32,0,80,0,0,0,80,0,0,0,,,,2012-02-20 08:00,2012-03-01 16:00,,2012-02-15 08:00,2012-02-26 16:00,2012-02-15 08:00,2012-02-26 16:00,2012-02-15 08:00,2012-02-26 16:00,,2012-02-20 08:00,2012-03-01 16:00,,PT_Normal,,,,,9Sljklf9V0SMW0FUszguHQ,,,,N,0,0,,,2012-05-08 14:07,2012-05-08 14:07,admin,admin
17,128043,3614,19574,4347,1,0,N,N,N,CP_Drtn,TT_Task,DT_FixedDUR2,RV_OK,TK_NotStart,A12170,Metal Works,,32,24,80,0,0,0,80,0,0,0,,,,2012-02-20 08:00,2012-03-01 16:00,,2012-02-15 08:00,2012-02-26 16:00,2012-02-15 08:00,2012-02-26 16:00,2012-02-15 08:00,2012-02-26 16:00,,2012-02-20 08:00,2012-03-01 16:00,,PT_Normal,,,,,PBBIOTHWrEqQLZ0Kp1y/qQ,,,,N,0,0,,,2012-05-08 14:07,2012-05-08 14:07,admin,admin
18,128044,3614,19574,4347,1,0,N,N,N,CP_Drtn,TT_Task,DT_FixedDUR2,RV_OK,TK_NotStart,A12180,Wood & Plastic,,32,24,80,0,0,0,80,0,0,0,,,,2012-02-20 08:00,2012-03-01 16:00,,2012-02-15 08:00,2012-02-26 16:00,2012-02-15 08:00,2012-02-26 16:00,2012-02-15 08:00,2012-02-26 16:00,,2012-02-20 08:00,2012-03-01 16:00,,PT_Normal,,,,,jezwTXEMD0aCRnHroHy/aw,,,,N,0,0,,,2012-05-08 14:07,2012-05-08 14:07,admin,admin
19,128045,3614,19575,4347,1,0,N,N,N,CP_Drtn,TT_Task,DT_FixedRate,RV_OK,TK_NotStart,A12190,Masonry Works,,0,0,80,0,0,0,80,0,0,0,,,,2011-12-17 08:00,2011-12-27 16:00,,2011-12-17 08:00,2011-12-27 16:00,2011-12-17 08:00,2011-12-27 16:00,2011-12-17 08:00,2011-12-27 16:00,,2011-12-17 08:00,2011-12-27 16:00,,PT_Normal,,,,,QmTQCn4ZAEeBgN5IRKYRAg,Rix9NL0kO0Ga5Dr6IdgO8A,,,Y,0,0,,,2012-05-08 14:07,2012-05-08 14:07,admin,admin
20,128046,3614,19575,4347,1,0,N,N,N,CP_Drtn,TT_Task,DT_FixedRate,RV_OK,TK_NotStart,A12200,Plastering Works,,0,0,120,0,0,0,120,0,0,0,,,,2011-12-28 08:00,2012-01-14 16:00,,2011-12-28 08:00,2012-01-14 16:00,2011-12-28 08:00,2012-01-14 16:00,2011-12-28 08:00,2012-01-14 16:00,,2011-12-28 08:00,2012-01-14 16:00,,PT_Normal,,,,,9pFITT5MJk+4jLvPR48BaA,XIU/d+PUXUqRK1rTc5V1lw,,,Y,0,0,,,2012-05-08 14:07,2012-05-08 14:07,admin,admin
21,128047,3614,19575,4347,1,0,N,N,N,CP_Drtn,TT_Task,DT_FixedRate,RV_OK,TK_NotStart,A12250,Ceramic Wall Tiles,,0,0,56,0,0,0,56,0,0,0,,,,2012-02-07 08:00,2012-02-14 16:00,,2012-02-07 08:00,2012-02-14 16:00,2012-02-07 08:00,2012-02-14 16:00,2012-02-07 08:00,2012-02-14 16:00,,2012-02-07 08:00,2012-02-14 16:00,,PT_Normal,,,,,AyNrGexs00KTVFMvfHHbSA,46MGhZXulUidY84OGYbnuA,,,Y,0,0,,,2012-05-08 14:07,2012-05-08 14:07,admin,admin
22,128048,3614,19575,4347,1,0,N,N,N,CP_Drtn,TT_Task,DT_FixedRate,RV_OK,TK_NotStart,A12240,Painting Works,,32,32,240,0,0,0,240,0,0,0,,,,2012-01-19 08:00,2012-02-22 16:00,,2012-01-15 08:00,2012-02-18 16:00,2012-01-15 08:00,2012-02-18 16:00,2012-01-15 08:00,2012-02-18 16:00,,2012-01-19 08:00,2012-02-22 16:00,,PT_Normal,,,,,Mb1NhmSUZ0ein88Jkn6pmg,y3T2TUg/qUqIfptMbcUYDw,,,N,0,0,,,2012-05-08 14:07,2012-05-08 14:07,admin,admin
23,128049,3614,19575,4347,1,0,N,N,N,CP_Drtn,TT_Task,DT_FixedRate,RV_OK,TK_NotStart,A12260,Ceramic Tiles For Flooring & Skirting,,0,0,56,0,0,0,56,0,0,0,,,,2012-02-15 08:00,2012-02-22 16:00,,2012-02-15 08:00,2012-02-22 16:00,2012-02-15 08:00,2012-02-22 16:00,2012-02-15 08:00,2012-02-22 16:00,,2012-02-15 08:00,2012-02-22 16:00,,PT_Normal,,,,,eYpYLv+QHEumrvRUTtHGqw,9RX7KXtgwUOySVXuQz5S2Q,,,Y,0,0,,,2012-05-08 14:07,2012-05-08 14:07,admin,admin
24,128050,3614,19575,4347,1,0,N,N,N,CP_Drtn,TT_Task,DT_FixedRate,RV_OK,TK_NotStart,A12210,Thermal & Moisture Protection,,0,0,160,0,0,0,160,0,0,0,,,,2012-01-15 08:00,2012-02-06 16:00,,2012-01-15 08:00,2012-02-06 16:00,2012-01-15 08:00,2012-02-06 16:00,2012-01-15 08:00,2012-02-06 16:00,,2012-01-15 08:00,2012-02-06 16:00,,PT_Normal,,,,,GA6Mva6qK0y0kBMr3eMIgQ,auVv5UqTFE+iZhjI7me/eQ,,,Y,0,0,,,2012-05-08 14:07,2012-05-08 14:07,admin,admin
25,128051,3614,19575,4347,1,0,N,N,N,CP_Drtn,TT_Task,DT_FixedDUR2,RV_OK,TK_NotStart,A12270,Doors & Windows,,0,0,56,0,0,0,56,0,0,0,,,,2012-02-23 08:00,2012-03-01 16:00,,2012-02-23 08:00,2012-03-01 16:00,2012-02-23 08:00,2012-03-01 16:00,2012-02-23 08:00,2012-03-01 16:00,,2012-02-23 08:00,2012-03-01 16:00,,PT_Normal,,,,,+MoCQkr4Pk67IRT33+cFBA,4gyA+MT1jUmWiMFnZamnFQ,,,Y,0,0,,,2012-05-08 14:07,2012-05-08 14:07,admin,admin
26,128052,3614,19575,4347,1,0,N,N,N,CP_Drtn,TT_Task,DT_FixedDUR2,RV_OK,TK_NotStart,A12280,Metal Works,,16,8,40,0,0,0,40,0,0,0,,,,2012-02-26 08:00,2012-03-01 16:00,,2012-02-23 08:00,2012-02-28 16:00,2012-02-23 08:00,2012-02-28 16:00,2012-02-23 08:00,2012-02-28 16:00,,2012-02-26 08:00,2012-03-01 16:00,,PT_Normal,,,,,D4hWnua67kCimzuWav+MHg,7d+aMFycR0+Pq9dPNQLYXg,,,N,0,0,,,2012-05-08 14:07,2012-05-08 14:07,admin,admin
27,128053,3614,19575,4347,1,0,N,N,N,CP_Drtn,TT_Task,DT_FixedDUR2,RV_OK,TK_NotStart,A12290,Wood & Plastic,,16,8,40,0,0,0,40,0,0,0,,,,2012-02-26 08:00,2012-03-01 16:00,,2012-02-23 08:00,2012-02-28 16:00,2012-02-23 08:00,2012-02-28 16:00,2012-02-23 08:00,2012-02-28 16:00,,2012-02-26 08:00,2012-03-01 16:00,,PT_Normal,,,,,BE5fHKsrZU+ECSYVGcfmAA,DMXJWSI6zE616JGLhmMs0w,,,N,0,0,,,2012-05-08 14:07,2012-05-08 14:07,admin,admin
28,128054,3614,19575,4347,1,0,N,N,N,CP_Drtn,TT_Task,DT_FixedDUR2,RV_OK,TK_NotStart,A12300,Marble Works,,16,0,40,0,0,0,40,0,0,0,,,,2012-02-18 08:00,2012-02-22 16:00,,2012-02-15 08:00,2012-02-20 16:00,2012-02-15 08:00,2012-02-20 16:00,2012-02-15 08:00,2012-02-20 16:00,,2012-02-18 08:00,2012-02-22 16:00,,PT_Normal,,,,,RT6Nbf/Q6E2IgYG35Y5LIw,,,,N,0,0,,,2012-05-08 14:07,2012-05-08 14:07,admin,admin
29,128055,3614,19574,4347,1,0,N,N,N,CP_Drtn,TT_Task,DT_FixedDUR2,RV_OK,TK_NotStart,A12310,Marble Works,,32,0,160,0,0,0,160,0,0,0,,,,2012-01-28 08:00,2012-02-19 16:00,,2012-01-23 08:00,2012-02-14 16:00,2012-01-23 08:00,2012-02-14 16:00,2012-01-23 08:00,2012-02-14 16:00,,2012-01-28 08:00,2012-02-19 16:00,,PT_Normal,,,,,ygYy+NNr2EmtE3CEiMt0dw,whqqvLID4kG9WTa9dKJHwA,,,N,0,0,,,2012-05-08 14:07,2012-05-08 14:07,admin,admin
30,128056,3614,19575,4347,1,0,N,N,N,CP_Drtn,TT_Task,DT_FixedDUR2,RV_OK,TK_NotStart,A12320,Concrete Surfaces Works,,16,8,96,0,0,0,96,0,0,0,,,,2012-02-18 08:00,2012-03-01 16:00,,2012-02-15 08:00,2012-02-28 16:00,2012-02-15 08:00,2012-02-28 16:00,2012-02-15 08:00,2012-02-28 16:00,,2012-02-18 08:00,2012-03-01 16:00,,PT_Normal,,,,,wMi8o/WeV0OMVJiyJOkKAg,,,,N,0,0,,,2012-05-08 14:07,2012-05-08 14:07,admin,admin
