,task_id,proj_id,wbs_id,clndr_id,est_wt,phys_complete_pct,rev_fdbk_flag,lock_plan_flag,auto_compute_act_flag,complete_pct_type,task_type,duration_type,review_type,status_code,task_code,task_name,rsrc_id,total_float_hr_cnt,free_float_hr_cnt,remain_drtn_hr_cnt,act_work_qty,remain_work_qty,target_work_qty,target_drtn_hr_cnt,target_equip_qty,act_equip_qty,remain_equip_qty,cstr_date,act_start_date,act_end_date,late_start_date,late_end_date,expect_end_date,early_start_date,early_end_date,restart_date,reend_date,target_start_date,target_end_date,review_end_date,rem_late_start_date,rem_late_end_date,cstr_type,priority_type,suspend_date,resume_date,float_path,float_path_order,guid,tmpl_guid,cstr_date2,cstr_type2,driving_path_flag,act_this_per_work_qty,act_this_per_equip_qty,external_early_start_date,external_late_end_date,create_date,update_date,create_user,update_user
0,144008,5115,22794,6086,1,0,N,N,N,CP_Drtn,TT_Task,DT_FixedDUR2,RV_OK,TK_NotStart,4229PPC140,Fabrication upto R.F.S for pump,,1792,0,1344,0,0,0,1344,0,0,0,,,,2013-02-26 08:00,2013-08-12 16:00,,2012-07-05 08:00,2012-12-31 16:00,2012-07-05 08:00,2012-12-31 16:00,2012-07-05 08:00,2012-12-31 16:00,,2013-02-26 08:00,2013-08-12 16:00,,PT_Normal,,,,,gd/CeYxpf0Gevjvc3jme+w,a1p6ym4oS+6+JNBX4DLt6Q,,,N,0,0,,,2012-06-19 11:46,2012-06-20 09:59,admin,admin
1,144009,5115,22794,6087,1,0,N,N,N,CP_Drtn,TT_Task,DT_FixedDUR2,RV_OK,TK_NotStart,4229PPC150,Delivery upto site for pump,,1800,1800,360,0,0,0,360,0,0,0,,,,2013-08-13 08:00,2013-09-26 16:00,,2012-12-31 16:00,2013-02-13 16:00,2012-12-31 16:00,2013-02-13 16:00,2012-12-31 16:00,2013-02-13 16:00,,2013-08-13 08:00,2013-09-26 16:00,,PT_Normal,,,,,cP67TA/7ZkiPxBTv7EU4sg,u9JIoe/yQfmyL1WOCEcyRg,,,N,0,0,,,2012-06-19 11:46,2012-06-20 09:59,admin,admin
2,144010,5115,22794,6085,1,0,N,N,N,CP_Drtn,TT_Task,DT_FixedDUR2,RV_OK,TK_NotStart,4229PPC130,Receive revised commercial offers for pump,,1264,0,40,0,0,0,40,0,0,0,,,,2013-01-28 08:00,2013-02-03 16:00,,2012-06-06 08:00,2012-06-12 16:00,2012-06-06 08:00,2012-06-12 16:00,2012-06-06 08:00,2012-06-12 16:00,,2013-01-28 08:00,2013-02-03 16:00,,PT_Normal,,,,,Mb3x8HzoP0qTaFco0+tzxQ,T9aUbtojSXilwnqU2Wi+6w,,,N,0,0,,,2012-06-19 11:46,2012-06-20 09:59,admin,admin
3,144011,5115,22794,6085,1,0,N,N,N,CP_Drtn,TT_Task,DT_FixedDUR2,RV_OK,TK_NotStart,4229PPC160,Client approval on bid committee reccomendation,,1264,0,16,0,0,0,16,0,0,0,,,,2013-02-19 08:00,2013-02-20 16:00,,2012-06-28 08:00,2012-07-01 16:00,2012-06-28 08:00,2012-07-01 16:00,2012-06-28 08:00,2012-07-01 16:00,,2013-02-19 08:00,2013-02-20 16:00,,PT_Normal,,,,,Ti4Ifg4n2UeFnXROpvrVLw,dsqur9zFTQ2kGKH9ey3RIw,,,N,0,0,,,2012-06-19 11:46,2012-06-20 09:59,admin,admin
4,144012,5115,22794,6085,1,0,N,N,N,CP_Drtn,TT_Task,DT_FixedDUR2,RV_OK,TK_NotStart,4229PPC170,L.C issued by Gupco,,2368,2368,40,0,0,0,40,0,0,0,,,,2013-09-22 08:00,2013-09-26 16:00,,2012-07-19 08:00,2012-07-25 16:00,2012-07-19 08:00,2012-07-25 16:00,2012-07-19 08:00,2012-07-25 16:00,,2013-09-22 08:00,2013-09-26 16:00,,PT_Normal,,,,,mYUpQsmlaUaxd0b/mPLhRA,OMAcK7vgQqWlnsKzB4SywA,,,N,0,0,,,2012-06-19 11:46,2012-06-20 09:59,admin,admin
5,144013,5115,22794,6085,1,100,N,N,N,CP_Drtn,TT_Task,DT_FixedDUR2,RV_OK,TK_Complete,4229PPC100,Issue RFQ for pump,,,,0,0,0,0,16,0,0,0,,2012-03-14 00:00,2012-03-20 00:00,2013-01-23 08:00,2013-01-23 08:00,,2012-06-02 00:00,2012-06-02 00:00,,,2012-04-29 08:00,2012-04-30 16:00,,,,,PT_Normal,,,,,FfzzLzIo/UG/WgYiC2ot5g,+2aOWobYTG6hCGLLfOCD3Q,,,N,0,0,,,2012-06-19 11:46,2012-06-20 10:09,admin,admin
6,144014,5115,22794,6086,1,100,N,N,N,CP_Drtn,TT_Task,DT_FixedDUR2,RV_OK,TK_Complete,4229PPC110,Bidding for pump,,,,0,0,0,0,320,0,0,0,,2012-03-21 00:00,2012-04-28 00:00,2013-01-23 08:00,2013-01-23 08:00,,2012-06-02 00:00,2012-06-02 00:00,,,2012-04-28 08:00,2012-06-06 16:00,,,,,PT_Normal,,,,,W/GiF9nNL0qXpJQyTdq4mA,tYAyHVveTym5PZWh1QwHuQ,,,N,0,0,,,2012-06-19 11:46,2012-06-20 10:09,admin,admin
7,144015,5115,22794,6085,1,0,N,N,N,CP_Drtn,TT_Task,DT_FixedDUR2,RV_OK,TK_NotStart,4229PPC180,commercial evaluation & bid committee for pump,,1264,0,88,0,0,0,88,0,0,0,,,,2013-02-04 08:00,2013-02-18 16:00,2012-06-27 16:00,2012-06-13 08:00,2012-06-27 16:00,2012-06-13 08:00,2012-06-27 16:00,2012-06-13 08:00,2012-06-27 16:00,,2013-02-04 08:00,2013-02-18 16:00,,PT_Normal,,,,,dtqIMj+eok2zgxTKu0ldEQ,7F1NBuHCRsuN+gRucuQXhg,,,N,0,0,,,2012-06-19 11:46,2012-06-20 09:59,admin,admin
8,144016,5115,22794,6085,1,0,N,N,N,CP_Drtn,TT_Task,DT_FixedDUR2,RV_OK,TK_NotStart,4229PPC190,F.O.C for pump,,1264,0,24,0,0,0,24,0,0,0,,,,2013-02-21 08:00,2013-02-25 16:00,,2012-07-02 08:00,2012-07-04 16:00,2012-07-02 08:00,2012-07-04 16:00,2012-07-02 08:00,2012-07-04 16:00,,2013-02-21 08:00,2013-02-25 16:00,,PT_Normal,,,,,IVk8WJDYdUauOr7Qj9aidA,s40e5+jDQyOWv96vSoQDuQ,,,N,0,0,,,2012-06-19 11:46,2012-06-20 09:59,admin,admin
9,144017,5115,22794,6085,1,0,N,N,N,CP_Drtn,TT_Task,DT_FixedDUR2,RV_OK,TK_NotStart,4229PPC200,P.O for pump,,2368,0,40,0,0,0,40,0,0,0,,,,2013-09-15 08:00,2013-09-19 16:00,,2012-07-12 08:00,2012-07-18 16:00,2012-07-12 08:00,2012-07-18 16:00,2012-07-12 08:00,2012-07-18 16:00,,2013-09-15 08:00,2013-09-19 16:00,,PT_Normal,,,,,vVyNVXDceUWY+yY8YgLhUQ,A5Q7aUOxRr+lBFCKOJdk6Q,,,N,0,0,,,2012-06-19 11:46,2012-06-20 09:59,admin,admin
10,144018,5115,22794,6085,1,0,N,N,N,CP_Drtn,TT_LOE,DT_FixedDUR2,RV_OK,TK_Active,4229PPC120,T.E.R for  pump,,1264,0,24,0,0,0,240,0,0,0,,2012-04-29 00:00,,2012-04-29 08:00,2013-01-27 16:00,,2012-06-03 08:00,2012-06-05 16:00,2012-06-03 08:00,2012-06-05 16:00,2012-04-29 08:00,2012-06-07 16:00,,2012-04-29 08:00,2013-01-27 16:00,,PT_Normal,,,,,8ceA3DOZu0+/hVAmC2JC3Q,qop3jGJXRzSmAG4KFxnkEQ,,,N,0,0,,,2012-06-19 11:46,2012-06-20 10:09,admin,admin
11,144019,5115,22794,6085,1,0,N,N,N,CP_Drtn,TT_LOE,DT_FixedDUR2,RV_OK,TK_NotStart,4229PPC210,MRP for pump,,2368,0,40,0,0,0,40,0,0,0,,,,2013-09-08 08:00,2013-09-12 16:00,,2012-07-05 08:00,2012-07-11 16:00,2012-07-05 08:00,2012-07-11 16:00,2012-07-05 08:00,2012-07-11 16:00,,2013-09-08 08:00,2013-09-12 16:00,,PT_Normal,,,,,8ncf4mjOwkG8IM+FT1ulMw,uQOO7klWSbqBLLrj/LWZpQ,,,N,0,0,,,2012-06-19 11:46,2012-06-20 10:09,admin,admin
12,144020,5115,22795,6086,1,0,N,N,N,CP_Drtn,TT_Task,DT_FixedDUR2,RV_OK,TK_NotStart,4229PFV200,Fabrication upto R.F.S,,1808,0,1344,0,0,0,1344,0,0,0,,,,2013-03-13 08:00,2013-08-27 16:00,,2012-07-18 08:00,2013-01-13 16:00,2012-07-18 08:00,2013-01-13 16:00,2012-07-18 08:00,2013-01-13 16:00,,2013-03-13 08:00,2013-08-27 16:00,,PT_Normal,,,,,cxEKnQfD60G6XGf77kTRUg,YpF1cbjLSNmmuSIlXsh/5g,,,N,0,0,,,2012-06-19 11:46,2012-06-20 09:59,admin,admin
13,144021,5115,22795,6086,1,0,N,N,N,CP_Drtn,TT_Task,DT_FixedDUR2,RV_OK,TK_NotStart,4229PFV210,Delivery upto site,,1808,0,240,0,0,0,240,0,0,0,,,,2013-08-28 08:00,2013-09-26 16:00,,2013-01-14 08:00,2013-02-12 16:00,2013-01-14 08:00,2013-02-12 16:00,2013-01-14 08:00,2013-02-12 16:00,,2013-08-28 08:00,2013-09-26 16:00,,PT_Normal,,,,,Hak6dzYZRESdi4LtyL/ciQ,NgGQizK+RduStbx0VPvmwQ,,,N,0,0,,,2012-06-19 11:46,2012-06-20 09:59,admin,admin
14,144022,5115,22795,6085,1,0,N,N,N,CP_Drtn,TT_Task,DT_FixedDUR2,RV_OK,TK_NotStart,4229PFV130,Receive revised commercial offers,,1280,0,40,0,0,0,40,0,0,0,,,,2013-02-14 08:00,2013-02-20 16:00,,2012-06-21 08:00,2012-06-27 16:00,2012-06-21 08:00,2012-06-27 16:00,2012-06-21 08:00,2012-06-27 16:00,,2013-02-14 08:00,2013-02-20 16:00,,PT_Normal,,,,,Rdcxic3BREm4FLf8PFTvVg,xZAyxBt6SKW9L4MiAA3DVA,,,N,0,0,,,2012-06-19 11:46,2012-06-20 09:59,admin,admin
15,144023,5115,22795,6085,1,0,N,N,N,CP_Drtn,TT_Task,DT_FixedDUR2,RV_OK,TK_NotStart,4229PFV150,Client approval on bid committee reccommendation,,1280,0,16,0,0,0,16,0,0,0,,,,2013-03-07 08:00,2013-03-10 16:00,,2012-07-12 08:00,2012-07-15 16:00,2012-07-12 08:00,2012-07-15 16:00,2012-07-12 08:00,2012-07-15 16:00,,2013-03-07 08:00,2013-03-10 16:00,,PT_Normal,,,,,WfPCMtfxpUS4j0oHOua4UA,Geyi07DTSxOfOHFyI/Uohw,,,N,0,0,,,2012-06-19 11:46,2012-06-20 09:59,admin,admin
16,144024,5115,22795,6085,1,0,N,N,N,CP_Drtn,TT_Task,DT_FixedDUR2,RV_OK,TK_NotStart,4229PFV190,L.C issued by Gupco,,2320,2320,40,0,0,0,40,0,0,0,,,,2013-09-22 08:00,2013-09-26 16:00,,2012-07-29 08:00,2012-08-02 16:00,2012-07-29 08:00,2012-08-02 16:00,2012-07-29 08:00,2012-08-02 16:00,,2013-09-22 08:00,2013-09-26 16:00,,PT_Normal,,,,,vCTICeOVZUCXS/xoWGo+1w,y5LsRR69QQOuwAg4V5LzDQ,,,N,0,0,,,2012-06-19 11:46,2012-06-20 09:59,admin,admin
17,144025,5115,22795,6085,1,100,N,N,N,CP_Drtn,TT_Task,DT_FixedDUR2,RV_OK,TK_Complete,4229PFV100,Issue RFQ for SDV,,,,0,0,0,0,16,0,0,0,,2012-05-06 00:00,2012-05-07 16:00,2013-01-26 16:00,2013-01-26 16:00,,2012-06-02 00:00,2012-06-02 00:00,,,2012-04-29 08:00,2012-04-30 16:00,,,,,PT_Normal,,,,,wHBnBNh8v0SYmJaMuOt4fw,DZgy5C57TmGeuXtV8stk7g,,,N,0,0,,,2012-06-19 11:46,2012-06-20 10:09,admin,admin
18,144026,5115,22795,6086,1,0,N,N,N,CP_Drtn,TT_Task,DT_FixedDUR2,RV_OK,TK_Active,4229PFV110,Bidding for SDV,,1816,0,0,0,0,0,240,0,0,0,,2012-05-01 08:00,,2013-01-26 16:00,2013-01-26 16:00,2012-05-20 16:00,2012-06-02 08:00,2012-06-02 08:00,2012-06-02 08:00,2012-06-02 08:00,2012-05-01 08:00,2012-05-30 16:00,,2013-01-26 16:00,2013-01-26 16:00,,PT_Normal,,,,,ghtrLsxQ3UqjBX8ogMv0oQ,Y1VZYWCvS+ihGgfVbH0oMw,,,N,0,0,,,2012-06-19 11:46,2012-06-20 09:59,admin,admin
19,144027,5115,22795,6085,1,0,N,N,N,CP_Drtn,TT_Task,DT_FixedDUR2,RV_OK,TK_NotStart,4229PFV140,Commercial evaluation & bid committee for SDV,,1280,0,80,0,0,0,80,0,0,0,,,,2013-02-21 08:00,2013-03-06 16:00,,2012-06-28 08:00,2012-07-11 16:00,2012-06-28 08:00,2012-07-11 16:00,2012-06-28 08:00,2012-07-11 16:00,,2013-02-21 08:00,2013-03-06 16:00,,PT_Normal,,,,,cB4BdbyKV02Vqsbj5tf71A,LYMQdgR7RxyEuAULuvCsww,,,N,0,0,,,2012-06-19 11:46,2012-06-20 09:59,admin,admin
20,144028,5115,22795,6085,1,0,N,N,N,CP_Drtn,TT_Task,DT_FixedDUR2,RV_OK,TK_NotStart,4229PFV160,F.O.C for SDV,,1280,0,16,0,0,0,16,0,0,0,,,,2013-03-11 08:00,2013-03-12 16:00,,2012-07-16 08:00,2012-07-17 16:00,2012-07-16 08:00,2012-07-17 16:00,2012-07-16 08:00,2012-07-17 16:00,,2013-03-11 08:00,2013-03-12 16:00,,PT_Normal,,,,,tvF2y9o0SES9pgOYbDoYow,JlpKpXEVTleuOfYGVnTtSQ,,,N,0,0,,,2012-06-19 11:46,2012-06-20 09:59,admin,admin
21,144029,5115,22795,6085,1,0,N,N,N,CP_Drtn,TT_Task,DT_FixedDUR2,RV_OK,TK_NotStart,4229PFV180,P.O for SDV,,2320,0,16,0,0,0,16,0,0,0,,,,2013-09-18 08:00,2013-09-19 16:00,,2012-07-25 08:00,2012-07-26 16:00,2012-07-25 08:00,2012-07-26 16:00,2012-07-25 08:00,2012-07-26 16:00,,2013-09-18 08:00,2013-09-19 16:00,,PT_Normal,,,,,uOXg1TU2/0SmB8Ub9F1iXg,Q6pu6xH4QJWG7K0B3PCRfg,,,N,0,0,,,2012-06-19 11:46,2012-06-20 09:59,admin,admin
22,144030,5115,22795,6085,1,0,N,N,N,CP_Drtn,TT_LOE,DT_FixedDUR2,RV_OK,TK_Active,4229PFV120,T.E.R for SDV,,1280,0,112,0,0,0,80,0,0,0,,2012-05-27 00:00,,2012-05-27 08:00,2013-02-13 16:00,,2012-06-03 08:00,2012-06-20 16:00,2012-06-03 08:00,2012-06-20 16:00,2012-05-27 08:00,2012-06-07 16:00,,2012-05-27 08:00,2013-02-13 16:00,,PT_Normal,,,,,E7LRbV+l4k2rNNwESFvCHg,95OuTWdmTci9yjKVo77sOQ,,,N,0,0,,,2012-06-19 11:46,2012-06-20 10:09,admin,admin
23,144031,5115,22795,6085,1,0,N,N,N,CP_Drtn,TT_LOE,DT_FixedDUR2,RV_OK,TK_NotStart,4229PFV170,MRP for SDV,,2320,0,40,0,0,0,40,0,0,0,,,,2013-09-11 08:00,2013-09-17 16:00,,2012-07-18 08:00,2012-07-24 16:00,2012-07-18 08:00,2012-07-24 16:00,2012-07-18 08:00,2012-07-24 16:00,,2013-09-11 08:00,2013-09-17 16:00,,PT_Normal,,,,,bbygxgLtfkiG+hR9T+ZFnQ,yW+b6vdoTdiABNTPTmZG3Q,,,N,0,0,,,2012-06-19 11:46,2012-06-20 10:09,admin,admin
24,144032,5115,22796,6086,1,0,N,N,N,CP_Drtn,TT_Task,DT_FixedDUR2,RV_OK,TK_Active,4229PAP110,Bidding for Piping bulk,,1888,0,72,0,0,0,200,0,0,0,,2012-05-17 00:00,,2013-02-05 08:00,2013-02-13 16:00,2012-06-10 16:00,2012-06-02 08:00,2012-06-10 16:00,2012-06-02 08:00,2012-06-10 16:00,2012-05-01 08:00,2012-05-25 16:00,,2013-02-05 08:00,2013-02-13 16:00,,PT_Normal,,,,,hR0+0OjueEiO3Wk2gBrd+A,RSkHUusFTRuhwCxDwsC8AA,,,N,0,0,,,2012-06-19 11:46,2012-06-20 09:59,admin,admin
25,144033,5115,22796,6085,1,0,N,N,N,CP_Drtn,TT_Task,DT_FixedDUR2,RV_OK,TK_NotStart,4229PAP140,commercial evaluation & bid committee for Piping bulk,,1344,0,96,0,0,0,96,0,0,0,,,,2013-03-21 08:00,2013-04-07 16:00,,2012-07-16 08:00,2012-07-31 16:00,2012-07-16 08:00,2012-07-31 16:00,2012-07-16 08:00,2012-07-31 16:00,,2013-03-21 08:00,2013-04-07 16:00,,PT_Normal,,,,,2/NNq2bBq0W3u8qpY5l9dQ,dwbiupqaT4OV78e3gkBdLA,,,N,0,0,,,2012-06-19 11:46,2012-06-20 09:59,admin,admin
26,144034,5115,22796,6085,1,0,N,N,N,CP_Drtn,TT_Task,DT_FixedDUR2,RV_OK,TK_NotStart,4229PAP160,F.O.C for Piping bulk,,1344,0,24,0,0,0,24,0,0,0,,,,2013-04-10 08:00,2013-04-14 16:00,,2012-08-05 08:00,2012-08-07 16:00,2012-08-05 08:00,2012-08-07 16:00,2012-08-05 08:00,2012-08-07 16:00,,2013-04-10 08:00,2013-04-14 16:00,,PT_Normal,,,,,g5F6D9ikL0q3lJ+xbF6HuQ,ZznbW4I5TQyz/MkfaaZZPQ,,,N,0,0,,,2012-06-19 11:46,2012-06-20 09:59,admin,admin
27,144035,5115,22796,6085,1,0,N,N,N,CP_Drtn,TT_Task,DT_FixedDUR2,RV_OK,TK_NotStart,4229PAP180,P.O for Piping bulk,,2200,0,16,0,0,0,16,0,0,0,,,,2013-09-18 08:00,2013-09-19 16:00,,2012-08-15 08:00,2012-08-16 16:00,2012-08-15 08:00,2012-08-16 16:00,2012-08-15 08:00,2012-08-16 16:00,,2013-09-18 08:00,2013-09-19 16:00,,PT_Normal,,,,,1vAx68FKbkutgGtZaJM7pA,SKWwrxukTLi+Xg4zfSINFg,,,N,0,0,,,2012-06-19 11:46,2012-06-20 09:59,admin,admin
28,144036,5115,22796,6085,1,0,N,N,N,CP_Drtn,TT_LOE,DT_FixedDUR2,RV_OK,TK_NotStart,4229PAP120,T.E.R for Piping bulk,,1344,0,160,0,0,0,160,0,0,0,,,,2013-02-14 08:00,2013-03-13 16:00,,2012-06-11 08:00,2012-07-08 16:00,2012-06-11 08:00,2012-07-08 16:00,2012-06-11 08:00,2012-07-08 16:00,,2013-02-14 08:00,2013-03-13 16:00,,PT_Normal,,,,,xC1vtftLuE69+o+HhQOX9g,sMA8/NSLRxS0HOz3t1hrYg,,,N,0,0,,,2012-06-19 11:46,2012-06-20 10:09,admin,admin
29,144037,5115,22796,6085,1,0,N,N,N,CP_Drtn,TT_LOE,DT_FixedDUR2,RV_OK,TK_NotStart,4229PAP170,MRP for Piping bulk,,2200,0,40,0,0,0,40,0,0,0,,,,2013-09-11 08:00,2013-09-17 16:00,,2012-08-08 08:00,2012-08-14 16:00,2012-08-08 08:00,2012-08-14 16:00,2012-08-08 08:00,2012-08-14 16:00,,2013-09-11 08:00,2013-09-17 16:00,,PT_Normal,,,,,nqKF9zfc6kS057ikWlasGw,JsEiLB/fSHyyIe88IaN4EA,,,N,0,0,,,2012-06-19 11:46,2012-06-20 10:09,admin,admin
30,144038,5115,22796,6085,1,0,N,N,N,CP_Drtn,TT_Task,DT_FixedDUR2,RV_OK,TK_NotStart,4229PAP130,Receive revised commercial offers,,1344,0,40,0,0,0,40,0,0,0,,,,2013-03-14 08:00,2013-03-20 16:00,,2012-07-09 08:00,2012-07-15 16:00,2012-07-09 08:00,2012-07-15 16:00,2012-07-09 08:00,2012-07-15 16:00,,2013-03-14 08:00,2013-03-20 16:00,,PT_Normal,,,,,cPavvYKzHU2Oq7VHf7XtQw,l5/2fB1JQ1i2IDfyCFhI2Q,,,N,0,0,,,2012-06-19 11:46,2012-06-20 09:59,admin,admin
31,144039,5115,22796,6085,1,0,N,N,N,CP_Drtn,TT_Task,DT_FixedDUR2,RV_OK,TK_NotStart,4229PAP150,Client approval on bid committee reccomendation,,1344,0,16,0,0,0,16,0,0,0,,,,2013-04-08 08:00,2013-04-09 16:00,,2012-08-01 08:00,2012-08-02 16:00,2012-08-01 08:00,2012-08-02 16:00,2012-08-01 08:00,2012-08-02 16:00,,2013-04-08 08:00,2013-04-09 16:00,,PT_Normal,,,,,WuZYOGvWE0+kbwbtoTaKuQ,kXkyA5JCSby3AKvv4I+fPw,,,N,0,0,,,2012-06-19 11:46,2012-06-20 09:59,admin,admin
32,144040,5115,22796,6085,1,0,N,N,N,CP_Drtn,TT_Task,DT_FixedDUR2,RV_OK,TK_NotStart,4229PAP190,L.C issued by Gupco,,2200,2200,40,0,0,0,40,0,0,0,,,,2013-09-22 08:00,2013-09-26 16:00,,2012-08-26 08:00,2012-08-30 16:00,2012-08-26 08:00,2012-08-30 16:00,2012-08-26 08:00,2012-08-30 16:00,,2013-09-22 08:00,2013-09-26 16:00,,PT_Normal,,,,,e6YUsJWNgUyjBR3BbokIsg,EMf+ksWjTcGuMuIbswsUsQ,,,N,0,0,,,2012-06-19 11:46,2012-06-20 09:59,admin,admin
33,144041,5115,22796,6087,1,0,N,N,N,CP_Drtn,TT_Task,DT_FixedDUR2,RV_OK,TK_NotStart,4229PAP210,Delivery upto site,,1920,1920,360,0,0,0,360,0,0,0,,,,2013-08-13 08:00,2013-09-26 16:00,,2012-12-18 08:00,2013-01-29 16:00,2012-12-18 08:00,2013-01-29 16:00,2012-12-18 08:00,2013-01-29 16:00,,2013-08-13 08:00,2013-09-26 16:00,,PT_Normal,,,,,mfLhFBaOT0+ZgBJc5sguqQ,aOArhSsxTIK7Sik+Ukt+iQ,,,N,0,0,,,2012-06-19 11:46,2012-06-20 09:59,admin,admin
34,144042,5115,22796,6086,1,0,N,N,N,CP_Drtn,TT_Task,DT_FixedDUR2,RV_OK,TK_NotStart,4229PAP200,Fabrication upto R.F.S,,1904,0,960,0,0,0,960,0,0,0,,,,2013-04-15 08:00,2013-08-12 16:00,,2012-08-08 08:00,2012-12-17 16:00,2012-08-08 08:00,2012-12-17 16:00,2012-08-08 08:00,2012-12-17 16:00,,2013-04-15 08:00,2013-08-12 16:00,,PT_Normal,,,,,tiSo//Z7yUaJL4bmVoWMiQ,cHSTCih9Tk23IDxIZKUWJQ,,,N,0,0,,,2012-06-19 11:46,2012-06-20 09:59,admin,admin
35,144043,5115,22796,6085,1,100,N,N,N,CP_Drtn,TT_Task,DT_FixedDUR2,RV_OK,TK_Complete,4229PAP100,Issue RFQ for Piping bulk,,,,0,0,0,0,16,0,0,0,,2012-05-15 00:00,2012-05-16 16:00,2013-02-05 08:00,2013-02-05 08:00,,2012-06-02 00:00,2012-06-02 00:00,,,2012-04-29 08:00,2012-04-30 16:00,,,,,PT_Normal,,,,,3mIruC98/kGHa3HOjNLk+g,6KlRPzYwSm21oBDABhlikw,,,N,0,0,,,2012-06-19 11:46,2012-06-20 10:09,admin,admin
36,144044,5115,22783,6085,1,0,N,N,N,CP_Drtn,TT_Task,DT_FixedDUR2,RV_OK,TK_NotStart,4229PBV150,L.C issued by Gupco,,1960,0,40,0,0,0,40,0,0,0,,,,2013-05-26 08:00,2013-05-30 16:00,,2012-06-03 08:00,2012-06-07 16:00,2012-06-03 08:00,2012-06-07 16:00,2012-06-03 08:00,2012-06-07 16:00,,2013-05-26 08:00,2013-05-30 16:00,,PT_Normal,,,,,gqws4Q72JEadRv30zQR0YQ,wwxo8iztR4uwjBbqOwAQ2A,,,N,0,0,,,2012-06-19 11:46,2012-06-20 09:59,admin,admin
37,144045,5115,22783,6086,1,100,N,N,N,CP_Drtn,TT_Task,DT_FixedDUR2,RV_OK,TK_Complete,4229PBV20,Bidding for Piping Ball Valves,,,,0,0,0,0,112,0,0,0,,2011-12-09 00:00,2012-01-11 00:00,2013-05-26 08:00,2013-05-26 08:00,,2012-06-02 00:00,2012-06-02 00:00,,,2012-01-08 08:00,2012-01-21 16:00,,,,,PT_Normal,,,,,myFsZGA4ekWJQ5ffjicQmw,Yu8xLuDmTK2083Jgm9UK9w,,,N,0,0,,,2012-06-19 11:46,2012-06-20 10:09,admin,admin
38,144046,5115,22783,6085,1,100,N,N,N,CP_Drtn,TT_Task,DT_FixedDUR2,RV_OK,TK_Complete,4229PBV50,commercial evaluation & bid committee,,,,0,0,0,0,80,0,0,0,,2012-03-14 00:00,2012-03-26 00:00,2013-05-26 08:00,2013-05-26 08:00,,2012-06-02 00:00,2012-06-02 00:00,,,2012-04-02 08:00,2012-04-15 16:00,,,,,PT_Normal,,,,,ROOpTwKsAUK0BBCdbeH3QA,8lajj5dDQ12k8uidEmvUJA,,,N,0,0,,,2012-06-19 11:46,2012-06-20 10:09,admin,admin
39,144047,5115,22783,6085,1,100,N,N,N,CP_Drtn,TT_Task,DT_FixedDUR2,RV_OK,TK_Complete,4229PBV70,F.O.C for Piping Ball Valves,,,,0,0,0,0,24,0,0,0,,2012-04-04 00:00,2012-04-05 00:00,2013-05-26 08:00,2013-05-26 08:00,,2012-06-02 00:00,2012-06-02 00:00,,,2012-04-09 08:00,2012-04-11 16:00,,,,,PT_Normal,,,,,XMhyhspaYkidXmfA4pGRYA,fPBWqCCmSjiusQBVBet/Yg,,,N,0,0,,,2012-06-19 11:46,2012-06-20 10:09,admin,admin
40,144048,5115,22783,6085,1,100,N,N,N,CP_Drtn,TT_Task,DT_FixedDUR2,RV_OK,TK_Complete,4229PBV90,P.O for Piping Ball Valves,,,,0,0,0,0,16,0,0,0,,2012-04-15 00:00,2012-04-17 00:00,2013-05-26 08:00,2013-05-26 08:00,,2012-06-02 00:00,2012-06-02 00:00,,,2012-04-12 08:00,2012-04-15 16:00,,,,,PT_Normal,,,,,jhak39Vp30ytLLXnbGA4nw,duYuABFbS6q7ugETwQdWAA,,,N,0,0,,,2012-06-19 11:46,2012-06-20 10:09,admin,admin
41,144049,5115,22783,6086,1,0,N,N,N,CP_Drtn,TT_Task,DT_FixedDUR2,RV_OK,TK_Active,4229PBV110,Fabrication upto R.F.S (1st Batch),,2768,0,584,0,0,0,1008,0,0,0,,2012-04-17 00:00,,2013-06-01 08:00,2013-08-12 16:00,2012-08-19 16:00,2012-06-08 08:00,2012-08-19 16:00,2012-06-08 08:00,2012-08-19 16:00,2012-04-23 08:00,2012-09-07 16:00,,2013-06-01 08:00,2013-08-12 16:00,,PT_Normal,,,,,Oc1WvrUBwk61EPQ/1VMhsQ,MUE0xc3sREy7yrbUxfj6Kg,,,N,0,0,,,2012-06-19 11:46,2012-06-20 09:59,admin,admin
42,144050,5115,22783,6087,1,0,N,N,N,CP_Drtn,TT_Task,DT_FixedDUR2,RV_OK,TK_NotStart,4229PBV130,Delivery upto site (1st Batch),,2880,2880,360,0,0,0,360,0,0,0,,,,2013-08-13 08:00,2013-09-26 16:00,,2012-08-20 08:00,2012-10-03 16:00,2012-08-20 08:00,2012-10-03 16:00,2012-08-20 08:00,2012-10-03 16:00,,2013-08-13 08:00,2013-09-26 16:00,,PT_Normal,,,,,xEr3HVVQ7EmgEt6IxMAHNA,WLKa0aw9R+qpA5hDH3w6uw,,,N,0,0,,,2012-06-19 11:46,2012-06-20 09:59,admin,admin
43,144051,5115,22783,6086,1,0,N,N,N,CP_Drtn,TT_Task,DT_FixedDUR2,RV_OK,TK_NotStart,4229PBV120,Fabrication upto R.F.S (2nd Batch) for minimal  balance,,1592,0,960,0,0,0,960,0,0,0,,,,2013-04-15 08:00,2013-08-12 16:00,,2012-09-28 08:00,2013-01-25 16:00,2012-09-28 08:00,2013-01-25 16:00,2012-09-28 08:00,2013-01-25 16:00,,2013-04-15 08:00,2013-08-12 16:00,,PT_Normal,,,,,XXUwIMLhfE2oGqXo5WnlGg,m7SNJWfsQZKDCN3in5Q+QA,,,N,0,0,,,2012-06-19 11:46,2012-06-20 09:59,admin,admin
44,144052,5115,22783,6087,1,0,N,N,N,CP_Drtn,TT_Task,DT_FixedDUR2,RV_OK,TK_NotStart,4229PBV140,Delivery upto site (2nd Batch) for minimal  balance,,1592,1592,360,0,0,0,360,0,0,0,,,,2013-08-13 08:00,2013-09-26 16:00,,2013-01-26 08:00,2013-03-11 16:00,2013-01-26 08:00,2013-03-11 16:00,2013-01-26 08:00,2013-03-11 16:00,,2013-08-13 08:00,2013-09-26 16:00,,PT_Normal,,,,,4ar4hLhZd06mHOr4H8m7kQ,Vaw+U/N1T9aumpmU0wKkYw,,,N,0,0,,,2012-06-19 11:46,2012-06-20 09:59,admin,admin
45,144053,5115,22783,6085,1,100,N,N,N,CP_Drtn,TT_Task,DT_FixedDUR2,RV_OK,TK_Complete,4229PBV40,Receive revised commercial offers,,,,0,0,0,0,40,0,0,0,,2012-02-14 00:00,2012-03-13 00:00,2013-05-26 08:00,2013-05-26 08:00,,2012-06-02 00:00,2012-06-02 00:00,,,2012-03-04 08:00,2012-03-08 16:00,,,,,PT_Normal,,,,,vvZyZEsHZEmHBWJt7fUHXA,gPd+4xZNQWyiUU6UpYt4NA,,,N,0,0,,,2012-06-19 11:46,2012-06-20 10:09,admin,admin
46,144054,5115,22783,6085,1,100,N,N,N,CP_Drtn,TT_Task,DT_FixedDUR2,RV_OK,TK_Complete,4229PBV60,Client approval on bid committee reccomendation,,,,0,0,0,0,16,0,0,0,,2012-03-27 00:00,2012-04-03 16:00,2013-05-26 08:00,2013-05-26 08:00,,2012-06-02 00:00,2012-06-02 00:00,,,2012-04-01 08:00,2012-04-02 16:00,,,,,PT_Normal,,,,,vX3LzMmAGkOhn4BdOPtm/Q,eO33vFhRRgGwJlaL3fIMBQ,,,N,0,0,,,2012-06-19 11:46,2012-06-20 10:09,admin,admin
47,144055,5115,22783,6085,1,100,N,N,N,CP_Drtn,TT_Task,DT_FixedDUR2,RV_OK,TK_Complete,4229PBV10,Issue RFQ for Piping Ball Valves,,,,0,0,0,0,16,0,0,0,,2011-12-08 00:00,2011-12-08 00:00,2013-05-26 08:00,2013-05-26 08:00,,2012-06-02 00:00,2012-06-02 00:00,,,2012-01-01 08:00,2012-01-02 16:00,,,,,PT_Normal,,,,,VOrJcoAOVUiej6aYEoO0WQ,yL99yNJ4SBuFcg03a/QZPw,,,N,0,0,,,2012-06-19 11:46,2012-06-20 10:09,admin,admin
48,144056,5115,22783,6085,1,100,N,N,N,CP_Drtn,TT_LOE,DT_FixedDrtn,RV_OK,TK_Complete,4229PBV30,T.E.R for Piping Ball Valves,,,,0,0,0,0,96,0,0,0,,2012-01-12 00:00,2012-02-13 00:00,,,,,,,,2012-01-15 08:00,2012-01-31 16:00,,,,,PT_Normal,,,,,K06SW5MWQEWP+c7GAT8B4w,HUjbjFE3S0+4svMQFDJBpw,,,N,0,0,,,2012-06-19 11:46,2012-06-19 11:46,admin,admin
49,144057,5115,22783,6085,1,100,N,N,N,CP_Drtn,TT_LOE,DT_FixedDUR2,RV_OK,TK_Complete,4229PBV80,MRP for Piping Ball Valves,,,,0,0,0,0,32,0,0,0,,2012-04-08 08:00,2012-04-12 00:00,,,,,,,,2012-04-08 08:00,2012-04-11 16:00,,,,,PT_Normal,,,,,iv/CxICLEEW1sGx2P77KeA,DBlm3vcAQ5OplCZIzFE2Eg,,,N,0,0,,,2012-06-19 11:46,2012-06-19 11:46,admin,admin
50,144058,5115,22781,6087,1,0,N,N,N,CP_Drtn,TT_Task,DT_FixedDUR2,RV_OK,TK_NotStart,4229PSG100,Delivery upto site,,2296,272,72,0,0,0,72,0,0,0,,,,2013-09-18 08:00,2013-09-26 16:00,,2012-12-07 08:00,2012-12-15 16:00,2012-12-07 08:00,2012-12-15 16:00,2012-12-07 08:00,2012-12-15 16:00,,2013-09-18 08:00,2013-09-26 16:00,,PT_Normal,,,,,lUuTL+U0g0CfVE96gWD+LQ,Ed1rw6pVGkqfXjRfFT7JpQ,,,N,0,0,,,2012-06-19 11:46,2012-06-20 09:59,admin,admin
51,144059,5115,22781,6085,1,100,N,N,N,CP_Drtn,TT_Task,DT_FixedDUR2,RV_OK,TK_Complete,4229PSG30,Receive revised commercial offers,,,,0,0,0,0,40,0,0,0,,2012-01-16 00:00,2012-01-30 00:00,2013-01-14 08:00,2013-01-14 08:00,,2012-06-02 00:00,2012-06-02 00:00,,,2012-01-10 08:00,2012-01-16 16:00,,,,,PT_Normal,,,,,D39oQq3IukWRdgPr5/kxRQ,rsbY6IPE9Ey3ZU3ZNeLLVg,,,N,0,0,,,2012-06-19 11:46,2012-06-20 10:09,admin,admin
52,144060,5115,22781,6085,1,100,N,N,N,CP_Drtn,TT_Task,DT_FixedDUR2,RV_OK,TK_Complete,4229PSG50,Client approval on bid committee reccomendation,,,,0,0,0,0,16,0,0,0,,2012-02-29 00:00,2012-03-11 00:00,2013-01-14 08:00,2013-01-14 08:00,,2012-06-02 00:00,2012-06-02 00:00,,,2012-03-06 08:00,2012-03-07 16:00,,,,,PT_Normal,,,,,//VCKllknEufNi5vQDNZYQ,iKP7vyvUVkGYjFWGXsYtWw,,,N,0,0,,,2012-06-19 11:46,2012-06-20 10:09,admin,admin
53,144061,5115,22781,6086,1,0,N,N,N,CP_Drtn,TT_Task,DT_FixedDUR2,RV_OK,TK_Active,4229PSG90,Fabrication upto R.F.S,,1720,0,1360,0,0,0,1360,0,0,0,,2012-05-27 00:00,,2013-01-21 08:00,2013-07-09 16:00,2012-12-06 16:00,2012-06-08 08:00,2012-12-06 16:00,2012-06-08 08:00,2012-12-06 16:00,2012-05-11 08:00,2012-11-08 16:00,,2013-01-21 08:00,2013-07-09 16:00,,PT_Normal,,,,,X7yT9HC4dkCd9+QsuEAhHw,7UQ9XmTabEqxyA7/76n9MA,,,N,0,0,,,2012-06-19 11:46,2012-06-20 09:59,admin,admin
54,144062,5115,22781,6085,1,0,N,N,N,CP_Drtn,TT_Task,DT_FixedDUR2,RV_OK,TK_NotStart,4229PSG80,L.C issued by Gupco,,1208,0,40,0,0,0,40,0,0,0,,,,2013-01-14 08:00,2013-01-20 16:00,,2012-06-03 08:00,2012-06-07 16:00,2012-06-03 08:00,2012-06-07 16:00,2012-06-03 08:00,2012-06-07 16:00,,2013-01-14 08:00,2013-01-20 16:00,,PT_Normal,,,,,fp94hTshj06BpJnK3BVx3A,/xqtBKQ3QEuTmEP+B+vEag,,,N,0,0,,,2012-06-19 11:46,2012-06-20 09:59,admin,admin
55,144063,5115,22781,6085,1,100,N,N,N,CP_Drtn,TT_Task,DT_FixedDUR2,RV_OK,TK_Complete,4229PSG10,Issue RFQ for SGS,,,,0,0,0,0,16,0,0,0,,2011-08-25 00:00,2011-08-28 00:00,2013-01-14 08:00,2013-01-14 08:00,,2012-06-02 00:00,2012-06-02 00:00,,,2011-08-15 08:00,2011-08-16 16:00,,,,,PT_Normal,,,,,jTZPytIPlkidr0qKaSgBIw,PapX/E/5VEedYgMn9pW1WA,,,N,0,0,,,2012-06-19 11:46,2012-06-20 10:09,admin,admin
56,144064,5115,22781,6086,1,100,N,N,N,CP_Drtn,TT_Task,DT_FixedDUR2,RV_OK,TK_Complete,4229PSG20,Bidding for SGS,,,,0,0,0,0,264,0,0,0,,2011-08-29 00:00,2011-09-26 00:00,2013-01-14 08:00,2013-01-14 08:00,,2012-06-02 00:00,2012-06-02 00:00,,,2011-08-17 08:00,2011-09-18 16:00,,,,,PT_Normal,,,,,QoUeDVfLkEyg5w85UGcoGA,WAPraHdgpEiuGrgnPTRw+A,,,N,0,0,,,2012-06-19 11:46,2012-06-20 10:09,admin,admin
57,144065,5115,22781,6085,1,100,N,N,N,CP_Drtn,TT_Task,DT_FixedDUR2,RV_OK,TK_Complete,4229PSG40,commercial evaluation & bid committee for SGS,,,,0,0,0,0,176,0,0,0,,2012-02-01 00:00,2012-02-29 00:00,2013-01-14 08:00,2013-01-14 08:00,,2012-06-02 00:00,2012-06-02 00:00,,,2012-03-06 08:00,2012-04-04 16:00,,,,,PT_Normal,,,,,SMMRAGvlgUmHPjUvf6YejA,e/V43NRVMUS133iTAw1J2Q,,,N,0,0,,,2012-06-19 11:46,2012-06-20 10:09,admin,admin
58,144066,5115,22781,6085,1,100,N,N,N,CP_Drtn,TT_Task,DT_FixedDUR2,RV_OK,TK_Complete,4229PSG60,F.O.C for SGS,,,,0,0,0,0,24,0,0,0,,2012-03-12 00:00,2012-05-06 00:00,2013-01-14 08:00,2013-01-14 08:00,,2012-06-02 00:00,2012-06-02 00:00,,,2012-04-29 08:00,2012-05-01 16:00,,,,,PT_Normal,,,,,jz1923X5+UaD3tdDtNJ9Tg,4AXOah8HAEeGpjijEBPUrg,,,N,0,0,,,2012-06-19 11:46,2012-06-20 10:09,admin,admin
59,144067,5115,22781,6085,1,100,N,N,N,CP_Drtn,TT_Task,DT_FixedDUR2,RV_OK,TK_Complete,4229PSG70,P.O for SGS,,,,0,0,0,0,16,0,0,0,,2012-05-08 00:00,2012-05-27 00:00,2013-01-14 08:00,2013-01-14 08:00,,2012-06-02 00:00,2012-06-02 00:00,,,2012-05-02 08:00,2012-05-03 16:00,,,,,PT_Normal,,,,,Tsh3jl05g02VT+H2qADsaw,AvajsHLxjEGyyQn6kYuXCQ,,,N,0,0,,,2012-06-19 11:46,2012-06-20 10:09,admin,admin
60,144068,5115,22781,6085,1,100,N,N,N,CP_Drtn,TT_LOE,DT_FixedDUR2,RV_OK,TK_Complete,A1230,T.E.R for  SGS,,,,0,0,0,0,200,0,0,0,,2011-09-28 08:00,2012-01-16 00:00,,,,,,,,2011-09-28 08:00,2011-11-02 16:00,,,,,PT_Normal,,,,,bqvRlswJskG90teJmcWEWQ,vXpc3RMask+39YuXt2zsqw,,,N,0,0,,,2012-06-19 11:46,2012-06-19 11:46,admin,admin
61,144069,5115,22781,6085,1,100,N,N,N,CP_Drtn,TT_LOE,DT_FixedDUR2,RV_OK,TK_Complete,A1450,MRP for SGS,,,,0,0,0,0,40,0,0,0,,2012-03-08 08:00,2012-05-08 16:00,,,,,,,,2012-03-08 08:00,2012-03-14 16:00,,,,,PT_Normal,,,,,hQ2ZtL/3dkyccUTUjtebBA,rUARi0MZeUWCfJu72L1JvQ,,,N,0,0,,,2012-06-19 11:46,2012-06-19 11:46,admin,admin
62,144070,5115,22782,6086,1,0,N,N,N,CP_Drtn,TT_Task,DT_FixedDUR2,RV_OK,TK_Active,4229PVE90,Fabrication upto R.F.S,,1720,0,808,0,0,0,1456,0,0,0,,2012-04-01 00:00,,2013-01-21 08:00,2013-05-01 16:00,2012-09-28 16:00,2012-06-08 08:00,2012-09-28 16:00,2012-06-08 08:00,2012-09-28 16:00,2012-04-06 08:00,2012-10-16 16:00,,2013-01-21 08:00,2013-05-01 16:00,,PT_Normal,,,,,8YYCOa7lsE2TJuKnNIjdkQ,7UQ9XmTabEqxyA7/76n9MA,,,N,0,0,,,2012-06-19 11:46,2012-06-20 09:59,admin,admin
63,144071,5115,22782,6087,1,0,N,N,N,CP_Drtn,TT_Task,DT_FixedDUR2,RV_OK,TK_NotStart,4229PVE100,Delivery upto site,,2808,784,112,0,0,0,112,0,0,0,,,,2013-09-13 08:00,2013-09-26 16:00,,2012-09-29 08:00,2012-10-12 16:00,2012-09-29 08:00,2012-10-12 16:00,2012-09-29 08:00,2012-10-12 16:00,,2013-09-13 08:00,2013-09-26 16:00,,PT_Normal,,,,,IDDwCk3fxE24Abai7yHuJg,Ed1rw6pVGkqfXjRfFT7JpQ,,,N,0,0,,,2012-06-19 11:46,2012-06-20 09:59,admin,admin
64,144072,5115,22782,6085,1,100,N,N,N,CP_Drtn,TT_Task,DT_FixedDUR2,RV_OK,TK_Complete,4229PVE30,Receive revised commercial offers,,,,0,0,0,0,40,0,0,0,,2012-02-21 00:00,2012-02-27 00:00,2013-01-14 08:00,2013-01-14 08:00,,2012-06-02 00:00,2012-06-02 00:00,,,2012-03-04 08:00,2012-03-08 16:00,,,,,PT_Normal,,,,,ktJ/uLgy2UiXPf1YnSKzhQ,rsbY6IPE9Ey3ZU3ZNeLLVg,,,N,0,0,,,2012-06-19 11:46,2012-06-20 10:09,admin,admin
65,144073,5115,22782,6085,1,100,N,N,N,CP_Drtn,TT_Task,DT_FixedDUR2,RV_OK,TK_Complete,4229PVE50,Client approval on bid committee reccommendation,,,,0,0,0,0,16,0,0,0,,2012-03-19 00:00,2012-03-19 00:00,2013-01-14 08:00,2013-01-14 08:00,,2012-06-02 00:00,2012-06-02 00:00,,,2012-04-15 08:00,2012-04-16 16:00,,,,,PT_Normal,,,,,tFEc+B0mCEOsA7XNW+AvnQ,iKP7vyvUVkGYjFWGXsYtWw,,,N,0,0,,,2012-06-19 11:46,2012-06-20 10:09,admin,admin
66,144074,5115,22782,6085,1,0,N,N,N,CP_Drtn,TT_Task,DT_FixedDUR2,RV_OK,TK_NotStart,4229PVE80,L.C issued by Gupco,,1208,0,40,0,0,0,40,0,0,0,,,,2013-01-14 08:00,2013-01-20 16:00,,2012-06-03 08:00,2012-06-07 16:00,2012-06-03 08:00,2012-06-07 16:00,2012-06-03 08:00,2012-06-07 16:00,,2013-01-14 08:00,2013-01-20 16:00,,PT_Normal,,,,,SNKLQGOD1kip9Gi3/rmbLA,/xqtBKQ3QEuTmEP+B+vEag,,,N,0,0,,,2012-06-19 11:46,2012-06-20 09:59,admin,admin
67,144075,5115,22782,6085,1,100,N,N,N,CP_Drtn,TT_Task,DT_FixedDUR2,RV_OK,TK_Complete,4229PVE10,Issue RFQ for pressure vessels,,,,0,0,0,0,16,0,0,0,,2011-11-17 00:00,2011-11-17 00:00,2013-01-14 08:00,2013-01-14 08:00,,2012-06-02 00:00,2012-06-02 00:00,,,2011-12-04 08:00,2011-12-05 16:00,,,,,PT_Normal,,,,,+3VfBecrXkWM7FwtWejQYA,PapX/E/5VEedYgMn9pW1WA,,,N,0,0,,,2012-06-19 11:46,2012-06-20 10:09,admin,admin
68,144076,5115,22782,6086,1,100,N,N,N,CP_Drtn,TT_Task,DT_FixedDUR2,RV_OK,TK_Complete,4229PVE20,Bidding for pressure vessels,,,,0,0,0,0,240,0,0,0,,2011-11-18 00:00,2011-12-08 00:00,2013-01-14 08:00,2013-01-14 08:00,,2012-06-02 00:00,2012-06-02 00:00,,,2011-12-06 08:00,2012-01-16 16:00,,,,,PT_Normal,,,,,4i/Y4VWonU+OVONFFxia1w,WAPraHdgpEiuGrgnPTRw+A,,,N,0,0,,,2012-06-19 11:46,2012-06-20 10:09,admin,admin
69,144077,5115,22782,6085,1,100,N,N,N,CP_Drtn,TT_Task,DT_FixedDUR2,RV_OK,TK_Complete,4229PVE40,commercial evaluation & bid committee for pressure vessels,,,,0,0,0,0,80,0,0,0,,2012-02-28 00:00,2012-03-18 00:00,2013-01-14 08:00,2013-01-14 08:00,,2012-06-02 00:00,2012-06-02 00:00,,,2012-03-05 08:00,2012-03-18 16:00,,,,,PT_Normal,,,,,wL/ZKkh8B028BiWrwRMMmQ,e/V43NRVMUS133iTAw1J2Q,,,N,0,0,,,2012-06-19 11:46,2012-06-20 10:09,admin,admin
70,144078,5115,22782,6085,1,100,N,N,N,CP_Drtn,TT_Task,DT_FixedDUR2,RV_OK,TK_Complete,4229PVE60,F.O.C for pressure vessels,,,,0,0,0,0,24,0,0,0,,2012-03-19 00:00,2012-03-20 00:00,2013-01-14 08:00,2013-01-14 08:00,,2012-06-02 00:00,2012-06-02 00:00,,,2012-04-17 08:00,2012-04-19 16:00,,,,,PT_Normal,,,,,QPZFEIgAIkuAaofZGoEz7A,4AXOah8HAEeGpjijEBPUrg,,,N,0,0,,,2012-06-19 11:46,2012-06-20 10:09,admin,admin
71,144079,5115,22782,6085,1,100,N,N,N,CP_Drtn,TT_Task,DT_FixedDUR2,RV_OK,TK_Complete,4229PVE70,P.O for pressure vessels,,,,0,0,0,0,40,0,0,0,,2012-03-26 00:00,2012-04-01 16:00,2013-01-14 08:00,2013-01-14 08:00,,2012-06-02 00:00,2012-06-02 00:00,,,2012-04-01 08:00,2012-04-05 16:00,,,,,PT_Normal,,,,,NiPwbi1U30G2ZEb1liVmeQ,AvajsHLxjEGyyQn6kYuXCQ,,,N,0,0,,,2012-06-19 11:46,2012-06-20 10:09,admin,admin
72,144080,5115,22782,6085,1,100,N,N,N,CP_Drtn,TT_LOE,DT_FixedDUR2,RV_OK,TK_Complete,A1140,T.E.R for pressure vessels,,,,0,0,0,0,160,0,0,0,,2011-12-15 00:00,2012-02-20 00:00,,,,,,,,2011-12-11 08:00,2012-01-05 16:00,,,,,PT_Normal,,,,,hwNrG9k5+ESHCBAKrwdR5g,TS5Hs2NeCUKGVdf9bmhFig,,,N,0,0,,,2012-06-19 11:46,2012-06-19 11:46,admin,admin
73,144081,5115,22782,6085,1,100,N,N,N,CP_Drtn,TT_LOE,DT_FixedDUR2,RV_OK,TK_Complete,A1410,MRP for  K.O drum,,,,0,0,0,0,16,0,0,0,,2012-03-21 08:00,2012-03-25 00:00,,,,,,,,2012-03-21 08:00,2012-03-22 16:00,,,,,PT_Normal,,,,,wy/kCTBCXEe0UU7c77noAQ,DIoV5T8jvEStrhTR29QXhQ,,,N,0,0,,,2012-06-19 11:46,2012-06-19 11:46,admin,admin
74,144082,5115,22786,6086,1,100,N,N,N,CP_Drtn,TT_Task,DT_FixedDUR2,RV_OK,TK_Complete,4229PTA90,Fabrication upto R.F.S,,,,0,0,0,0,960,0,0,0,,2012-03-03 00:00,2012-03-03 00:00,2012-12-31 08:00,2012-12-31 08:00,,2012-06-02 00:00,2012-06-02 00:00,,,2012-03-30 08:00,2012-07-27 16:00,,,,,PT_Normal,,,,,sXkWfY0UCEew3mwHzYu3kw,7UQ9XmTabEqxyA7/76n9MA,,,N,0,0,,,2012-06-19 11:46,2012-06-20 10:09,admin,admin
75,144083,5115,22786,6087,1,100,N,N,N,CP_Drtn,TT_Task,DT_FixedDUR2,RV_OK,TK_Complete,4229PTA100,Delivery upto site,,,,0,0,0,0,360,0,0,0,,2012-03-03 00:00,2012-03-03 00:00,2013-09-26 16:00,2013-09-26 16:00,,2012-06-02 00:00,2012-06-02 00:00,,,2012-07-28 08:00,2012-09-10 16:00,,,,,PT_Normal,,,,,yBOznqh+90OSZ3U3SCUc9Q,Ed1rw6pVGkqfXjRfFT7JpQ,,,N,0,0,,,2012-06-19 11:46,2012-06-20 10:09,admin,admin
76,144084,5115,22786,6085,1,100,N,N,N,CP_Drtn,TT_Task,DT_FixedDUR2,RV_OK,TK_Complete,4229PTA30,Receive revised commercial offers,,,,0,0,0,0,40,0,0,0,,2011-12-29 00:00,2012-01-05 00:00,2012-12-31 08:00,2012-12-31 08:00,,2012-06-02 00:00,2012-06-02 00:00,,,2012-01-01 08:00,2012-01-05 16:00,,,,,PT_Normal,,,,,PpU7Sk0aqUiYacuk45++nA,rsbY6IPE9Ey3ZU3ZNeLLVg,,,N,0,0,,,2012-06-19 11:46,2012-06-20 10:09,admin,admin
77,144085,5115,22786,6085,1,100,N,N,N,CP_Drtn,TT_Task,DT_FixedDUR2,RV_OK,TK_Complete,4229PTA50,Client approval on bid committee reccomendation,,,,0,0,0,0,16,0,0,0,,2012-03-03 00:00,2012-03-03 00:00,2012-12-31 08:00,2012-12-31 08:00,,2012-06-02 00:00,2012-06-02 00:00,,,2012-03-11 08:00,2012-03-12 16:00,,,,,PT_Normal,,,,,ERBTRJwbN0OVlqH7dwgpCg,iKP7vyvUVkGYjFWGXsYtWw,,,N,0,0,,,2012-06-19 11:46,2012-06-20 10:09,admin,admin
78,144086,5115,22786,6085,1,100,N,N,N,CP_Drtn,TT_Task,DT_FixedDUR2,RV_OK,TK_Complete,4229PTA80,L.C issued by Gupco,,,,0,0,0,0,40,0,0,0,,2012-03-03 00:00,2012-03-03 00:00,2012-12-31 08:00,2012-12-31 08:00,,2012-06-02 00:00,2012-06-02 00:00,,,2012-03-25 08:00,2012-03-29 16:00,,,,,PT_Normal,,,,,rK/ePFzifUaQ+AUTNB4V5Q,/xqtBKQ3QEuTmEP+B+vEag,,,N,0,0,,,2012-06-19 11:46,2012-06-20 10:09,admin,admin
79,144087,5115,22786,6085,1,100,N,N,N,CP_Drtn,TT_Task,DT_FixedDUR2,RV_OK,TK_Complete,4229PTA10,Issue RFQ for tanks,,,,0,0,0,0,16,0,0,0,,2011-10-27 00:00,2011-10-27 00:00,2013-09-26 16:00,2013-09-26 16:00,,2012-06-02 00:00,2012-06-02 00:00,,,2011-11-20 08:00,2011-11-21 16:00,,,,,PT_Normal,,,,,NPYU1vsqUkWj49hLx9dwog,PapX/E/5VEedYgMn9pW1WA,,,N,0,0,,,2012-06-19 11:46,2012-06-20 10:09,admin,admin
80,144088,5115,22786,6086,1,100,N,N,N,CP_Drtn,TT_Task,DT_FixedDUR2,RV_OK,TK_Complete,4229PTA20,Bidding for tanks,,,,0,0,0,0,240,0,0,0,,2011-10-27 00:00,2011-11-24 00:00,2012-12-31 08:00,2012-12-31 08:00,,2012-06-02 00:00,2012-06-02 00:00,,,2011-11-22 08:00,2011-12-21 16:00,,,,,PT_Normal,,,,,sAGMnKR13EaD6A/0rIug7Q,WAPraHdgpEiuGrgnPTRw+A,,,N,0,0,,,2012-06-19 11:46,2012-06-20 10:09,admin,admin
81,144089,5115,22786,6085,1,100,N,N,N,CP_Drtn,TT_Task,DT_FixedDUR2,RV_OK,TK_Complete,4229PTA40,commercial evaluation & bid committee for tanks,,,,0,0,0,0,80,0,0,0,2012-01-08 00:00,2012-01-08 08:00,2012-03-03 00:00,2012-12-31 08:00,2012-12-31 08:00,,2012-06-02 00:00,2012-06-02 00:00,,,2012-01-08 08:00,2012-01-19 16:00,,,,CS_MSOA,PT_Normal,,,,,IVjmfVrtmU63ExOr+2Ry5A,e/V43NRVMUS133iTAw1J2Q,,,N,0,0,,,2012-06-19 11:46,2012-06-20 10:09,admin,admin
82,144090,5115,22786,6085,1,100,N,N,N,CP_Drtn,TT_Task,DT_FixedDUR2,RV_OK,TK_Complete,4229PTA60,F.O.C for tanks,,,,0,0,0,0,24,0,0,0,,2012-03-03 00:00,2012-03-03 00:00,2012-12-31 08:00,2012-12-31 08:00,,2012-06-02 00:00,2012-06-02 00:00,,,2012-03-13 08:00,2012-03-15 16:00,,,,,PT_Normal,,,,,ZkJhMuekWE2XqaquHmzRfw,4AXOah8HAEeGpjijEBPUrg,,,N,0,0,,,2012-06-19 11:46,2012-06-20 10:09,admin,admin
83,144091,5115,22786,6085,1,100,N,N,N,CP_Drtn,TT_Task,DT_FixedDUR2,RV_OK,TK_Complete,4229PTA70,P.O for tanks,,,,0,0,0,0,40,0,0,0,,2012-03-03 00:00,2012-03-03 00:00,2012-12-31 08:00,2012-12-31 08:00,,2012-06-02 00:00,2012-06-02 00:00,,,2012-03-18 08:00,2012-03-22 16:00,,,,,PT_Normal,,,,,Ebb+39+DwEWZTpA7DvhWMg,AvajsHLxjEGyyQn6kYuXCQ,,,N,0,0,,,2012-06-19 11:46,2012-06-20 10:09,admin,admin
84,144092,5115,22786,6085,1,100,N,N,N,CP_Drtn,TT_LOE,DT_FixedDUR2,RV_OK,TK_Complete,A1130,T.E.R for  tanks,,,,0,0,0,0,160,0,0,0,,2011-11-24 00:00,2011-12-29 00:00,,,,,,,,2011-12-04 08:00,2011-12-29 16:00,,,,,PT_Normal,,,,,uaA2rAbKuE6jnzoUAkhrRA,J+3VSORnYEKgQCu4Mr4NFw,,,N,0,0,,,2012-06-19 11:46,2012-06-19 11:46,admin,admin
85,144093,5115,22786,6085,1,100,N,N,N,CP_Drtn,TT_LOE,DT_FixedDUR2,RV_OK,TK_Complete,A1400,MRP for tanks,,,,0,0,0,0,40,0,0,0,,2012-03-01 00:00,2012-03-03 00:00,,,,,,,,2012-03-18 08:00,2012-03-22 16:00,,,,,PT_Normal,,,,,xaPxjNITXkueQ0PjH1+enw,pGi7uaR4ukGkLPQ1Hd56lg,,,N,0,0,,,2012-06-19 11:46,2012-06-19 11:46,admin,admin
86,144094,5115,22787,6085,1,100,N,N,N,CP_Drtn,TT_Task,DT_FixedDUR2,RV_OK,TK_Complete,4229PPL50,"Issue RFQ for 8"""" pipeline",,,,0,0,0,0,16,0,0,0,,2011-10-31 00:00,2011-10-31 00:00,2013-07-22 08:00,2013-07-22 08:00,,2012-06-02 00:00,2012-06-02 00:00,,,2011-12-04 08:00,2011-12-05 16:00,,,,,PT_Normal,,,,,YIdaUPga3EeJXmET2U/3LQ,,,,N,0,0,,,2012-06-19 11:46,2012-06-20 10:09,admin,admin
87,144095,5115,22787,6086,1,0,N,N,N,CP_Drtn,TT_Task,DT_FixedDUR2,RV_OK,TK_Active,4229PPL110,Fabrication upto R.F.S,,3232,0,240,0,0,0,1008,0,0,0,,2012-02-29 00:00,,2013-07-29 08:00,2013-08-27 16:00,2012-07-07 16:00,2012-06-08 08:00,2012-07-07 16:00,2012-06-08 08:00,2012-07-07 16:00,2012-03-09 08:00,2012-07-12 16:00,,2013-07-29 08:00,2013-08-27 16:00,,PT_Normal,,,,,szd1uVqhbEe8UoP+Ki/iew,R/NAXGokTRCnEENVLJ/sUA,,,N,0,0,,,2012-06-19 11:46,2012-06-20 09:59,admin,admin
88,144096,5115,22787,6087,1,0,N,N,N,CP_Drtn,TT_Task,DT_FixedDUR2,RV_OK,TK_NotStart,4229PPL120,Delivery upto site,,3344,1752,240,0,0,0,240,0,0,0,,,,2013-08-28 08:00,2013-09-26 16:00,,2012-07-08 08:00,2012-08-06 16:00,2012-07-08 08:00,2012-08-06 16:00,2012-07-08 08:00,2012-08-06 16:00,,2013-08-28 08:00,2013-09-26 16:00,,PT_Normal,,,,,WTdTI7c/kku4WNtvJofbeQ,eZ0Jc2KERKSeoPTuttR7qA,,,N,0,0,,,2012-06-19 11:46,2012-06-20 09:59,admin,admin
89,144097,5115,22787,6085,1,100,N,N,N,CP_Drtn,TT_Task,DT_FixedDUR2,RV_OK,TK_Complete,4229PPL70,Client approval on bid committee reccomendation,,,,0,0,0,0,16,0,0,0,,2012-02-13 00:00,2012-02-19 00:00,2013-07-22 08:00,2013-07-22 08:00,,2012-06-02 00:00,2012-06-02 00:00,,,2012-03-20 08:00,2012-03-21 16:00,,,,,PT_Normal,,,,,J3SxzL66OUu9UeWtF1zYZQ,p64Nr72NTx+uaiuhKYMg/w,,,N,0,0,,,2012-06-19 11:46,2012-06-20 10:09,admin,admin
90,144098,5115,22787,6085,1,0,N,N,N,CP_Drtn,TT_Task,DT_FixedDUR2,RV_OK,TK_NotStart,4229PPL100,L.C issued by Gupco,,2288,0,40,0,0,0,40,0,0,0,,,,2013-07-22 08:00,2013-07-28 16:00,,2012-06-03 08:00,2012-06-07 16:00,2012-06-03 08:00,2012-06-07 16:00,2012-06-03 08:00,2012-06-07 16:00,,2013-07-22 08:00,2013-07-28 16:00,,PT_Normal,,,,,ITCZkCkUb02ec5GtXvec4w,bmO2BodKSyWpRC6TayH5ug,,,N,0,0,,,2012-06-19 11:46,2012-06-20 09:59,admin,admin
91,144099,5115,22787,6085,1,100,N,N,N,CP_Drtn,TT_Task,DT_FixedDUR2,RV_OK,TK_Complete,4229PPL60,"commercial evaluation & bid committee for 8""""pipeline",,,,0,0,0,0,80,0,0,0,,2012-01-25 00:00,2012-01-30 00:00,2013-07-22 08:00,2013-07-22 08:00,,2012-06-02 00:00,2012-06-02 00:00,,,2012-03-06 08:00,2012-03-19 16:00,,,,,PT_Normal,,,,,cHGOLMsNq0ulc8bdm7uGjA,sFxdNzwOTBex/R7q5VbB/Q,,,N,0,0,,,2012-06-19 11:46,2012-06-20 10:09,admin,admin
92,144100,5115,22787,6085,1,100,N,N,N,CP_Drtn,TT_Task,DT_FixedDUR2,RV_OK,TK_Complete,4229PPL80,"F.O.C for 8"""" pipeline",,,,0,0,0,0,24,0,0,0,,2012-02-21 00:00,2012-02-26 00:00,2013-07-22 08:00,2013-07-22 08:00,,2012-06-02 00:00,2012-06-02 00:00,,,2012-03-04 08:00,2012-03-06 16:00,,,,,PT_Normal,,,,,X+u9HtEflkOVJCt8KE3ZZQ,f3+HEw7bS++sH713ZnOX6Q,,,N,0,0,,,2012-06-19 11:46,2012-06-20 10:09,admin,admin
93,144101,5115,22787,6085,1,100,N,N,N,CP_Drtn,TT_Task,DT_FixedDUR2,RV_OK,TK_Complete,4229PPL90,"P.O for 8"""" pipeline",,,,0,0,0,0,40,0,0,0,,2012-02-27 00:00,2012-02-29 00:00,2013-07-22 08:00,2013-07-22 08:00,,2012-06-02 00:00,2012-06-02 00:00,,,2012-03-04 08:00,2012-03-08 16:00,,,,,PT_Normal,,,,,CitoDPNcCEOyvdOO/KO6Fw,Ome5oXQSREmwSDyRtaFKtQ,,,N,0,0,,,2012-06-19 11:46,2012-06-20 10:09,admin,admin
94,144102,5115,22787,6086,1,100,N,N,N,CP_Drtn,TT_Task,DT_FixedDrtn,RV_OK,TK_Complete,4229PPL10,"Bidding for 8"""" pipeline",,,,0,0,0,0,280,0,0,0,,2011-11-01 00:00,2011-11-21 00:00,2013-07-22 08:00,2013-07-22 08:00,,2012-06-02 00:00,2012-06-02 00:00,,,2011-12-06 08:00,2012-01-21 16:00,,,,,PT_Normal,,,,,hxBINuuKwkKkAFXL3g93Pg,,,,N,0,0,,,2012-06-19 11:46,2012-06-20 10:09,admin,admin
95,144103,5115,22787,6085,1,100,N,N,N,CP_Drtn,TT_Task,DT_FixedDrtn,RV_OK,TK_Complete,4229PPL20,"Receive revised commercial offers for 8""""pipeline",,,,0,0,0,0,40,0,0,0,,2012-01-09 08:00,2012-01-24 00:00,2013-07-22 08:00,2013-07-22 08:00,,2012-06-02 00:00,2012-06-02 00:00,,,2012-01-09 08:00,2012-01-15 16:00,,,,,PT_Normal,,,,,FuL+zdFXGkyJDyxD0HDOYA,,,,N,0,0,,,2012-06-19 11:46,2012-06-20 10:09,admin,admin
96,144104,5115,22787,6085,1,100,N,N,N,CP_Drtn,TT_LOE,DT_FixedDUR2,RV_OK,TK_Complete,A1150,"T.E.R for 8""""line pipe",,,,0,0,0,0,231,0,0,0,,2011-11-22 00:00,2012-01-08 16:00,,,,,,,,2012-01-22 08:00,2012-03-01 15:00,,,,,PT_Normal,,,,,WTBtoAZoAEO1gg3i+XyjGg,7uF5bGdtl0SfRYxvT5GJ0w,,,N,0,0,,,2012-06-19 11:46,2012-06-19 11:46,admin,admin
97,144105,5115,22787,6085,1,100,N,N,N,CP_Drtn,TT_LOE,DT_FixedDUR2,RV_OK,TK_Complete,A1600,"MRP for 8"""" pipeline",,,,0,0,0,0,40,0,0,0,,2012-02-21 00:00,2012-02-26 00:00,,,,,,,,2012-03-04 08:00,2012-03-08 16:00,,,,,PT_Normal,,,,,pmlH5R4/r0eeuS7CDhKCTA,J/NOEfck6UScfk4m4xI+Hw,,,N,0,0,,,2012-06-19 11:46,2012-06-19 11:46,admin,admin
98,144106,5115,22784,6085,1,100,N,N,N,CP_Drtn,TT_LOE,DT_FixedDUR2,RV_OK,TK_Complete,A1220,T.E.R for kamos ring,,,,0,0,0,0,151,0,0,0,,2011-11-13 00:00,2011-11-20 00:00,,,,,,,,2011-12-04 08:00,2011-12-28 15:00,,,,,PT_Normal,,,,,5Epqq/s6DE2/my/sLzrRwQ,VIXmqmrRAE6RPd+GoKSRMQ,,,N,0,0,,,2012-06-19 11:46,2012-06-19 11:46,admin,admin
99,144107,5115,22784,6085,1,100,N,N,N,CP_Drtn,TT_LOE,DT_FixedDUR2,RV_OK,TK_Complete,A1540,MRP for kamos ring,,,,0,0,0,0,40,0,0,0,,2011-12-21 00:00,2011-12-26 00:00,,,,,,,,2012-01-08 08:00,2012-01-12 16:00,,,,,PT_Normal,,,,,f9//JCftq0itQQPSeHkNRQ,AmLZVJIw7EqS3cFL1qtY5Q,,,N,0,0,,,2012-06-19 11:46,2012-06-19 11:46,admin,admin
100,144108,5115,22784,6085,1,100,N,N,N,CP_Drtn,TT_Task,DT_FixedDUR2,RV_OK,TK_Complete,4229PKR80,L.C issued by Gupco,,,,0,0,0,0,8,0,0,0,,2012-01-02 00:00,2012-01-02 00:00,2013-09-26 16:00,2013-09-26 16:00,,2012-06-02 00:00,2012-06-02 00:00,,,2012-01-01 08:00,2012-01-01 16:00,,,,,PT_Normal,,,,,rTbN1G1CS0u7N8nfUjSipQ,3jITFGtr+kiLENdPR+Y//g,,,N,0,0,,,2012-06-19 11:46,2012-06-20 10:09,admin,admin
101,144109,5115,22784,6085,1,100,N,N,N,CP_Drtn,TT_Task,DT_FixedDUR2,RV_OK,TK_Complete,4229PKR40,commercial evaluation & bid committee for Kamos ring,,,,0,0,0,0,80,0,0,0,,2011-11-27 00:00,2011-12-07 00:00,2013-09-26 16:00,2013-09-26 16:00,,2012-06-02 00:00,2012-06-02 00:00,,,2011-12-11 08:00,2011-12-22 16:00,,,,,PT_Normal,,,,,SeTcqmjAvEy2ndMIu3M50g,3ro8V+iM2kWWUdMn3ENIug,,,N,0,0,,,2012-06-19 11:46,2012-06-20 10:09,admin,admin
102,144110,5115,22784,6085,1,100,N,N,N,CP_Drtn,TT_Task,DT_FixedDUR2,RV_OK,TK_Complete,4229PKR60,F.O.C for Kamos ring,,,,0,0,0,0,24,0,0,0,,2011-12-12 00:00,2011-12-20 00:00,2013-09-26 16:00,2013-09-26 16:00,,2012-06-02 00:00,2012-06-02 00:00,,,2012-01-03 08:00,2012-01-05 16:00,,,,,PT_Normal,,,,,w4ZQL4iFD0abu6hkjtHWrQ,aOz6IP5TRUi7G/HwE9JsZA,,,N,0,0,,,2012-06-19 11:46,2012-06-20 10:09,admin,admin
103,144111,5115,22784,6085,1,100,N,N,N,CP_Drtn,TT_Task,DT_FixedDUR2,RV_OK,TK_Complete,4229PKR70,P.O for Kamos ring,,,,0,0,0,0,32,0,0,0,,2011-12-27 08:00,2012-01-01 16:00,2013-09-26 16:00,2013-09-26 16:00,,2012-06-02 00:00,2012-06-02 00:00,,,2011-12-27 08:00,2012-01-01 16:00,,,,,PT_Normal,,,,,iprxTYWooUGpTFkZtfcYWw,4jZsUwnCVkyez1CGClmI4w,,,N,0,0,,,2012-06-19 11:46,2012-06-20 10:09,admin,admin
104,144112,5115,22784,6086,1,100,N,N,N,CP_Drtn,TT_Task,DT_FixedDrtn,RV_OK,TK_Complete,4229PKR20,Bidding for Kamos ring,,,,0,0,0,0,200,0,0,0,,2011-10-06 00:00,2011-11-12 00:00,2013-09-26 16:00,2013-09-26 16:00,,2012-06-02 00:00,2012-06-02 00:00,,,2011-11-01 08:00,2011-11-25 16:00,,,,,PT_Normal,,,,,p9SPZReUdE66kbAxqKd5aQ,aqDgHd8b8kmS1ml83ufGuA,,,N,0,0,,,2012-06-19 11:46,2012-06-20 10:09,admin,admin
105,144113,5115,22784,6085,1,100,N,N,N,CP_Drtn,TT_Task,DT_FixedDrtn,RV_OK,TK_Complete,4229PKR30,Receive revised commercial offers for Kamos ring,,,,0,0,0,0,40,0,0,0,,2011-11-21 00:00,2011-11-27 00:00,2013-09-26 16:00,2013-09-26 16:00,,2012-06-02 00:00,2012-06-02 00:00,,,2011-12-04 08:00,2011-12-08 16:00,,,,,PT_Normal,,,,,rZ/RUH4t+0e7Njs6Atky2A,cI8XFbOGtEiLgTZ3toUOuA,,,N,0,0,,,2012-06-19 11:46,2012-06-20 10:09,admin,admin
106,144114,5115,22784,6085,1,100,N,N,N,CP_Drtn,TT_Task,DT_FixedDUR2,RV_OK,TK_Complete,4229PKR10,Issue RFQ for Kamos ring,,,,0,0,0,0,16,0,0,0,,2011-10-05 00:00,2011-10-05 00:00,2013-09-26 16:00,2013-09-26 16:00,,2012-06-02 00:00,2012-06-02 00:00,,,2011-10-30 08:00,2011-10-31 16:00,,,,,PT_Normal,,,,,dyKcJTkmxkC0di6qxQ41hg,MF8ACxsV2EGTaIRXL+YVVw,,,N,0,0,,,2012-06-19 11:46,2012-06-20 10:09,admin,admin
107,144115,5115,22784,6086,1,100,N,N,N,CP_Drtn,TT_Task,DT_FixedDUR2,RV_OK,TK_Complete,4229PKR90,Fabrication upto R.F.S,,,,0,0,0,0,728,0,0,0,,2012-01-02 00:00,2012-03-04 00:00,2013-09-26 16:00,2013-09-26 16:00,,2012-06-02 00:00,2012-06-02 00:00,,,2012-01-28 08:00,2012-04-27 16:00,,,,,PT_Normal,,,,,71KrtFlv9EeBA3z06usuvQ,WR5vIkiNPkm7l0vU5ocNsA,,,N,0,0,,,2012-06-19 11:46,2012-06-20 10:09,admin,admin
108,144116,5115,22784,6087,1,100,N,N,N,CP_Drtn,TT_Task,DT_FixedDUR2,RV_OK,TK_Complete,4229PKR100,Delivery upto site,,,,0,0,0,0,240,0,0,0,,2012-03-05 00:00,2012-03-24 00:00,2013-09-26 16:00,2013-09-26 16:00,,2012-06-02 00:00,2012-06-02 00:00,,,2012-04-02 08:00,2012-05-01 16:00,,,,,PT_Normal,,,,,j5Ud80ZAPUujELytScu7mQ,o3ktBGgPHkOGVVqCO95mXA,,,N,0,0,,,2012-06-19 11:46,2012-06-20 10:09,admin,admin
109,144117,5115,22784,6085,1,100,N,N,N,CP_Drtn,TT_Task,DT_FixedDUR2,RV_OK,TK_Complete,4229PKR50,Client approval on bid committee reccomendation,,,,0,0,0,0,16,0,0,0,,2011-12-07 00:00,2011-12-11 00:00,2013-09-26 16:00,2013-09-26 16:00,,2012-06-02 00:00,2012-06-02 00:00,,,2012-01-01 08:00,2012-01-02 16:00,,,,,PT_Normal,,,,,8AkHKK9l1E6jwkuzOVxgOA,mQau4KbKWE2qc5jKaiAg/A,,,N,0,0,,,2012-06-19 11:46,2012-06-20 10:09,admin,admin
110,144118,5115,22785,6086,1,100,N,N,N,CP_Drtn,TT_Task,DT_FixedDrtn,RV_OK,TK_Complete,4229PAF20,Bidding for  Anchor Flanges,,,,0,0,0,0,200,0,0,0,,2011-10-27 00:00,2011-12-01 00:00,2013-08-21 08:00,2013-08-21 08:00,,2012-06-02 00:00,2012-06-02 00:00,,,2011-11-01 08:00,2011-11-25 16:00,,,,,PT_Normal,,,,,8J06+k8vGUaa4lNl9/rsrA,3gr+rFvxxEqInjchjLuZiw,,,N,0,0,,,2012-06-19 11:46,2012-06-20 10:09,admin,admin
111,144119,5115,22785,6085,1,100,N,N,N,CP_Drtn,TT_Task,DT_FixedDrtn,RV_OK,TK_Complete,4229PAF30,Receive revised commercial offers for  Anchor Flanges,,,,0,0,0,0,40,0,0,0,2012-01-08 00:00,2012-01-08 08:00,2012-01-12 00:00,2013-08-21 08:00,2013-08-21 08:00,,2012-06-02 00:00,2012-06-02 00:00,,,2012-01-08 08:00,2012-01-12 16:00,,,,CS_MSOA,PT_Normal,,,,,mDc6dfftxEGW3Kg4OaoXyw,YZqtY743iECtZCI8oAzGEw,,,N,0,0,,,2012-06-19 11:46,2012-06-20 10:09,admin,admin
112,144120,5115,22785,6085,1,100,N,N,N,CP_Drtn,TT_Task,DT_FixedDUR2,RV_OK,TK_Complete,4229PAF10,Issue RFQ for Anchor Flanges,,,,0,0,0,0,16,0,0,0,,2011-10-25 00:00,2011-10-26 00:00,2013-08-21 08:00,2013-08-21 08:00,,2012-06-02 00:00,2012-06-02 00:00,,,2011-10-30 08:00,2011-10-31 16:00,,,,,PT_Normal,,,,,GLwL+kHenEKshwVpOWWhzg,MrFyXV/ZwEKiOJ2hcnyoRg,,,N,0,0,,,2012-06-19 11:46,2012-06-20 10:09,admin,admin
113,144121,5115,22785,6086,1,100,N,N,N,CP_Drtn,TT_Task,DT_FixedDUR2,RV_OK,TK_Complete,4229PAF90,Fabrication upto R.F.S,,,,0,0,0,0,448,0,0,0,,2012-02-28 00:00,2012-05-15 00:00,2013-08-28 08:00,2013-08-28 08:00,,2012-06-07 16:00,2012-06-07 16:00,,,2012-03-09 08:00,2012-05-03 16:00,,,,,PT_Normal,,,,,Gd8/1b4xCUiEKsbSAJkCKw,qgd69YrpDkOI+oaKInsYUg,,,N,0,0,,,2012-06-19 11:46,2012-06-20 10:09,admin,admin
114,144122,5115,22785,6087,1,0,N,N,N,CP_Drtn,TT_Task,DT_FixedDUR2,RV_OK,TK_Active,4229PAF100,Delivery upto site,,3584,1992,240,0,0,0,240,0,0,0,,2012-05-18 00:00,,2013-08-28 08:00,2013-09-26 16:00,,2012-06-08 08:00,2012-07-07 16:00,2012-06-08 08:00,2012-07-07 16:00,2012-06-08 08:00,2012-07-07 16:00,,2013-08-28 08:00,2013-09-26 16:00,,PT_Normal,,,,,h3H04QVPbk2d1YGL8Ixynw,oyg01drvjUGu7ia9nCu4jQ,,,N,0,0,,,2012-06-19 11:46,2012-06-20 09:59,admin,admin
115,144123,5115,22785,6085,1,100,N,N,N,CP_Drtn,TT_Task,DT_FixedDUR2,RV_OK,TK_Complete,4229PAF50,Client approval on bid committee reccomendation,,,,0,0,0,0,16,0,0,0,,2012-02-07 00:00,2012-02-09 00:00,2013-08-21 08:00,2013-08-21 08:00,,2012-06-02 00:00,2012-06-02 00:00,,,2012-03-18 08:00,2012-03-19 16:00,,,,,PT_Normal,,,,,re9lAMI2YEC5RcXGqUBmow,HhBbqT7mmkq6ky9/qu9Xrw,,,N,0,0,,,2012-06-19 11:46,2012-06-20 10:09,admin,admin
116,144124,5115,22785,6085,1,0,N,N,N,CP_Drtn,TT_Task,DT_FixedDUR2,RV_OK,TK_NotStart,4229PAF80,L.C issued by Gupco,,2464,0,40,0,0,0,40,0,0,0,,,,2013-08-21 08:00,2013-08-27 16:00,,2012-06-03 08:00,2012-06-07 16:00,2012-06-03 08:00,2012-06-07 16:00,2012-06-03 08:00,2012-06-07 16:00,,2013-08-21 08:00,2013-08-27 16:00,,PT_Normal,,,,,+6aX+p+E0EK4cGnQyUfOvQ,Kd1Io08brUu0r3ObTHOVHg,,,N,0,0,,,2012-06-19 11:46,2012-06-20 09:59,admin,admin
117,144125,5115,22785,6085,1,100,N,N,N,CP_Drtn,TT_Task,DT_FixedDUR2,RV_OK,TK_Complete,4229PAF40,commercial evaluation & bid committee for  Anchor Flanges,,,,0,0,0,0,80,0,0,0,,2012-01-15 08:00,2012-02-06 00:00,2013-08-21 08:00,2013-08-21 08:00,,2012-06-02 00:00,2012-06-02 00:00,,,2012-01-15 08:00,2012-01-29 16:00,,,,,PT_Normal,,,,,rK67ugFUDkmV1AYp4+fWHA,g31Sg/5OdEWgMblFud4aKg,,,N,0,0,,,2012-06-19 11:46,2012-06-20 10:09,admin,admin
118,144126,5115,22785,6085,1,100,N,N,N,CP_Drtn,TT_Task,DT_FixedDUR2,RV_OK,TK_Complete,4229PAF60,F.O.C for  Anchor Flanges,,,,0,0,0,0,24,0,0,0,,2012-02-12 00:00,2012-02-13 00:00,2013-08-21 08:00,2013-08-21 08:00,,2012-06-02 00:00,2012-06-02 00:00,,,2012-03-04 08:00,2012-03-06 16:00,,,,,PT_Normal,,,,,rKIDZaDeKU+vI+uZaL8gZg,r1kiUYJl5E6F8x873gkW3Q,,,N,0,0,,,2012-06-19 11:46,2012-06-20 10:09,admin,admin
119,144127,5115,22785,6085,1,100,N,N,N,CP_Drtn,TT_Task,DT_FixedDUR2,RV_OK,TK_Complete,4229PAF70,P.O for  Anchor Flanges,,,,0,0,0,0,40,0,0,0,,2012-02-28 00:00,2012-02-28 00:00,2013-08-21 08:00,2013-08-21 08:00,,2012-06-02 00:00,2012-06-02 00:00,,,2012-03-04 08:00,2012-03-08 16:00,,,,,PT_Normal,,,,,xAKDNYPXOEqwjPKJqgsqHg,/iUKwzSdjUWnbLh4jcgmjw,,,N,0,0,,,2012-06-19 11:46,2012-06-20 10:09,admin,admin
120,144128,5115,22785,6085,1,100,N,N,N,CP_Drtn,TT_LOE,DT_FixedDUR2,RV_OK,TK_Complete,A1160,T.E.R for anchor flanges,,,,0,0,0,0,120,0,0,0,,2011-12-06 08:00,2012-01-05 16:00,,,,,,,,2011-12-06 08:00,2011-12-26 16:00,,,,,PT_Normal,,,,,JXAQ1h2NI0uabtJAeq37oQ,KcMGieJ0zEOkCUsRzSRnVg,,,N,0,0,,,2012-06-19 11:46,2012-06-19 11:46,admin,admin
121,144129,5115,22785,6085,1,100,N,N,N,CP_Drtn,TT_LOE,DT_FixedDUR2,RV_OK,TK_Complete,A1590,MRP for anchor flanges,,,,0,0,0,0,40,0,0,0,,2012-02-14 00:00,2012-02-28 00:00,,,,,,,,2012-03-04 08:00,2012-03-08 16:00,,,,,PT_Normal,,,,,1pz6sw6qxEuO+7gTyWlbsg,Pdlj45l+qUqauuzEbIoH+w,,,N,0,0,,,2012-06-19 11:46,2012-06-19 11:46,admin,admin
122,144130,5115,22791,6086,1,100,N,N,N,CP_Drtn,TT_Task,DT_FixedDrtn,RV_OK,TK_Complete,4229PIJ20,Bidding for Isolating joints,,,,0,0,0,0,200,0,0,0,,2011-10-20 00:00,2011-11-10 00:00,2013-08-21 08:00,2013-08-21 08:00,,2012-06-02 00:00,2012-06-02 00:00,,,2011-11-01 08:00,2011-11-25 16:00,,,,,PT_Normal,,,,,DiYTeJBg8ki8scwiW5q8PQ,bBQedupqd0KFz1dIppHZuQ,,,N,0,0,,,2012-06-19 11:46,2012-06-20 10:09,admin,admin
123,144131,5115,22791,6085,1,100,N,N,N,CP_Drtn,TT_Task,DT_FixedDrtn,RV_OK,TK_Complete,4229PIJ30,Receive revised commercial offers for Isolating joints,,,,0,0,0,0,40,0,0,0,,2011-12-13 08:00,2011-12-21 00:00,2013-08-21 08:00,2013-08-21 08:00,,2012-06-02 00:00,2012-06-02 00:00,,,2011-12-13 08:00,2011-12-19 16:00,,,,,PT_Normal,,,,,/6FYNOWkR06RLm+j0h/6gA,klxYrCfhKEa29w2695+dWw,,,N,0,0,,,2012-06-19 11:46,2012-06-20 10:09,admin,admin
124,144132,5115,22791,6085,1,100,N,N,N,CP_Drtn,TT_Task,DT_FixedDUR2,RV_OK,TK_Complete,4229PIJ10,Issue RFQ for Isolating joints,,,,0,0,0,0,16,0,0,0,,2011-10-19 00:00,2011-10-19 00:00,2013-08-21 08:00,2013-08-21 08:00,,2012-06-02 00:00,2012-06-02 00:00,,,2011-10-30 08:00,2011-10-31 16:00,,,,,PT_Normal,,,,,eoOWLKCjBE6aGO4pgFKoVw,as1huikPDUKtD+tVXnVG5w,,,N,0,0,,,2012-06-19 11:46,2012-06-20 10:09,admin,admin
125,144133,5115,22791,6086,1,0,N,N,N,CP_Drtn,TT_Task,DT_FixedDUR2,RV_OK,TK_Active,4229PIJ90,Fabrication upto R.F.S,,3472,0,0,0,0,0,784,0,0,0,,2012-02-03 00:00,,2013-08-27 16:00,2013-08-27 16:00,2012-05-12 16:00,2012-06-08 08:00,2012-06-08 08:00,2012-06-08 08:00,2012-06-08 08:00,2012-03-09 08:00,2012-06-14 16:00,,2013-08-27 16:00,2013-08-27 16:00,,PT_Normal,,,,,g7IzeH0O3UeSed+gGvlgbg,wggRnWZrx0WgSPrgNG50cA,,,N,0,0,,,2012-06-19 11:46,2012-06-20 09:59,admin,admin
126,144134,5115,22791,6087,1,0,N,N,N,CP_Drtn,TT_Task,DT_FixedDUR2,RV_OK,TK_NotStart,4229PIJ100,Delivery upto site,,3584,1992,240,0,0,0,240,0,0,0,,,,2013-08-28 08:00,2013-09-26 16:00,,2012-06-08 08:00,2012-07-07 16:00,2012-06-08 08:00,2012-07-07 16:00,2012-06-08 08:00,2012-07-07 16:00,,2013-08-28 08:00,2013-09-26 16:00,,PT_Normal,,,,,DKh2B+XwJEyrIpZ3MTsx6A,GuMhgm4xLky6jrSmhJlN2A,,,N,0,0,,,2012-06-19 11:46,2012-06-20 09:59,admin,admin
127,144135,5115,22791,6085,1,100,N,N,N,CP_Drtn,TT_Task,DT_FixedDUR2,RV_OK,TK_Complete,4229PIJ50,Client approval on bid committee reccomendation,,,,0,0,0,0,16,0,0,0,,2011-12-22 00:00,2012-01-03 00:00,2013-08-21 08:00,2013-08-21 08:00,,2012-06-02 00:00,2012-06-02 00:00,,,2012-01-03 08:00,2012-01-04 16:00,,,,,PT_Normal,,,,,NJgJzHjsUEqbN3P12RwwOA,q/oN1VQYJ0i3Kec9Fshb9w,,,N,0,0,,,2012-06-19 11:46,2012-06-20 10:09,admin,admin
128,144136,5115,22791,6085,1,0,N,N,N,CP_Drtn,TT_Task,DT_FixedDUR2,RV_OK,TK_NotStart,4229PIJ80,L.C issued by Gupco,,2464,0,40,0,0,0,40,0,0,0,,,,2013-08-21 08:00,2013-08-27 16:00,,2012-06-03 08:00,2012-06-07 16:00,2012-06-03 08:00,2012-06-07 16:00,2012-06-03 08:00,2012-06-07 16:00,,2013-08-21 08:00,2013-08-27 16:00,,PT_Normal,,,,,VVhhQjSA/0aweM6fGMSekg,/MEYDubBK0K6nVus4MoXaw,,,N,0,0,,,2012-06-19 11:46,2012-06-20 09:59,admin,admin
129,144137,5115,22791,6085,1,100,N,N,N,CP_Drtn,TT_Task,DT_FixedDUR2,RV_OK,TK_Complete,4229PIJ40,commercial evaluation & bid committee for Isolating joints,,,,0,0,0,0,80,0,0,0,,2011-12-13 00:00,2011-12-21 00:00,2013-08-21 08:00,2013-08-21 08:00,,2012-06-02 00:00,2012-06-02 00:00,,,2011-12-22 08:00,2012-01-04 16:00,,,,,PT_Normal,,,,,SMNJEwlMLE+zwzQjCSYhvQ,+GIhOJsP5EuRDusTK86C3Q,,,N,0,0,,,2012-06-19 11:46,2012-06-20 10:09,admin,admin
130,144138,5115,22791,6085,1,100,N,N,N,CP_Drtn,TT_Task,DT_FixedDUR2,RV_OK,TK_Complete,4229PIJ60,F.O.C for Isolating joints,,,,0,0,0,0,24,0,0,0,,2012-01-04 00:00,2012-01-23 16:00,2013-08-21 08:00,2013-08-21 08:00,,2012-06-02 00:00,2012-06-02 00:00,,,2012-01-23 08:00,2012-01-26 16:00,,,,,PT_Normal,,,,,Efa/ZfRdyUi7A1MpEhFi/g,m/zaAJ0juUCO2Ynoa4AOIg,,,N,0,0,,,2012-06-19 11:46,2012-06-20 10:09,admin,admin
131,144139,5115,22791,6085,1,100,N,N,N,CP_Drtn,TT_Task,DT_FixedDUR2,RV_OK,TK_Complete,4229PIJ70,P.O for Isolating joints,,,,0,0,0,0,40,0,0,0,,2012-02-01 08:00,2012-02-02 00:00,2013-08-21 08:00,2013-08-21 08:00,,2012-06-02 00:00,2012-06-02 00:00,,,2012-02-01 08:00,2012-02-07 16:00,,,,,PT_Normal,,,,,vNsEcSiSsEKjGpBm2YaGOA,51qm2usYr0+stGttA74aog,,,N,0,0,,,2012-06-19 11:46,2012-06-20 10:09,admin,admin
132,144140,5115,22791,6085,1,100,N,N,N,CP_Drtn,TT_LOE,DT_FixedDUR2,RV_OK,TK_Complete,A1170,T.E.R for isolating joints,,,,0,0,0,0,151,0,0,0,,2011-11-13 00:00,2011-12-08 00:00,,,,,,,,2011-12-04 08:00,2011-12-28 15:00,,,,,PT_Normal,,,,,pPThQGC28ESGhK73vxCJ5w,/RPpbpU2kkufsg8WhrxLvg,,,N,0,0,,,2012-06-19 11:46,2012-06-19 11:46,admin,admin
133,144141,5115,22791,6085,1,100,N,N,N,CP_Drtn,TT_LOE,DT_FixedDUR2,RV_OK,TK_Complete,A1570,MRP for isolating joints,,,,0,0,0,0,32,0,0,0,,2012-01-24 00:00,2012-01-31 00:00,,,,,,,,2012-01-29 08:00,2012-02-01 16:00,,,,,PT_Normal,,,,,J4n2QLZ7G0yBi0X6JT4sCg,Vx9as0BmD0SZpsBNAJdc+g,,,N,0,0,,,2012-06-19 11:46,2012-06-19 11:46,admin,admin
134,144142,5115,22792,6086,1,100,N,N,N,CP_Drtn,TT_Task,DT_FixedDrtn,RV_OK,TK_Complete,4229PHS20,Bidding for Heat shrink sleeves,,,,0,0,0,0,200,0,0,0,,2011-10-13 00:00,2011-11-02 00:00,2013-09-26 16:00,2013-09-26 16:00,,2012-06-02 00:00,2012-06-02 00:00,,,2011-11-01 08:00,2011-11-25 16:00,,,,,PT_Normal,,,,,n5pu/YpbUUyN2/ugbcr5Lg,07sjOHjKsE6iDWYX7870iw,,,N,0,0,,,2012-06-19 11:46,2012-06-20 10:09,admin,admin
135,144143,5115,22792,6085,1,100,N,N,N,CP_Drtn,TT_Task,DT_FixedDrtn,RV_OK,TK_Complete,4229PHS30,Receive revised commercial offers for Heat shrink sleeves,,,,0,0,0,0,40,0,0,0,,2011-12-06 08:00,2011-12-08 00:00,2013-09-26 16:00,2013-09-26 16:00,,2012-06-02 00:00,2012-06-02 00:00,,,2011-12-06 08:00,2011-12-12 16:00,,,,,PT_Normal,,,,,+chQTJNQoU68wkRuxZh9Gg,iD0sa1SMaEiOKBRQ1O2o6g,,,N,0,0,,,2012-06-19 11:46,2012-06-20 10:09,admin,admin
136,144144,5115,22792,6085,1,100,N,N,N,CP_Drtn,TT_Task,DT_FixedDUR2,RV_OK,TK_Complete,4229PHS10,Issue RFQ for Heat shrink sleeves,,,,0,0,0,0,16,0,0,0,,2011-10-12 00:00,2011-10-12 00:00,2013-09-26 16:00,2013-09-26 16:00,,2012-06-02 00:00,2012-06-02 00:00,,,2011-10-30 08:00,2011-10-31 16:00,,,,,PT_Normal,,,,,MhwAPw/tv0aEj1ME2VLy+Q,jfLoOt8Z6kGAt+HgfFvK3w,,,N,0,0,,,2012-06-19 11:46,2012-06-20 10:09,admin,admin
137,144145,5115,22792,6086,1,100,N,N,N,CP_Drtn,TT_Task,DT_FixedDUR2,RV_OK,TK_Complete,4229PHS90,Fabrication upto R.F.S,,,,0,0,0,0,392,0,0,0,,2012-01-24 00:00,2012-03-22 00:00,2013-09-26 16:00,2013-09-26 16:00,,2012-06-02 00:00,2012-06-02 00:00,,,2012-01-30 08:00,2012-03-18 16:00,,,,,PT_Normal,,,,,e6czRIGy3k+sZBJDoTIw8Q,LLxu6IKLk0yOdCX45wxHIQ,,,N,0,0,,,2012-06-19 11:46,2012-06-20 10:09,admin,admin
138,144146,5115,22792,6087,1,100,N,N,N,CP_Drtn,TT_Task,DT_FixedDUR2,RV_OK,TK_Complete,4229PHS100,Delivery upto site,,,,0,0,0,0,120,0,0,0,,2012-03-23 00:00,2012-05-27 00:00,2013-09-26 16:00,2013-09-26 16:00,,2012-06-02 00:00,2012-06-02 00:00,,,2012-03-31 08:00,2012-04-14 16:00,,,,,PT_Normal,,,,,jHa/1ltqB06WS/SCxf1nKA,/LOUFXStZU20NZFdwfal8w,,,N,0,0,,,2012-06-19 11:46,2012-06-20 10:09,admin,admin
139,144147,5115,22792,6085,1,100,N,N,N,CP_Drtn,TT_Task,DT_FixedDUR2,RV_OK,TK_Complete,4229PHS50,Client approval on bid committee reccomendation,,,,0,0,0,0,16,0,0,0,,2011-12-22 00:00,2012-01-03 00:00,2013-09-26 16:00,2013-09-26 16:00,,2012-06-02 00:00,2012-06-02 00:00,,,2012-01-01 08:00,2012-01-02 16:00,,,,,PT_Normal,,,,,7gqYalxqOUCOjK5sIN68DQ,iiL5R/hBgECY7+6p+U01Gg,,,N,0,0,,,2012-06-19 11:46,2012-06-20 10:09,admin,admin
140,144148,5115,22792,6085,1,100,N,N,N,CP_Drtn,TT_Task,DT_FixedDUR2,RV_OK,TK_Complete,4229PHS80,L.C issued by Gupco (not Applicable),,,,0,0,0,0,40,0,0,0,,2012-01-23 00:00,2012-01-23 00:00,2013-09-26 16:00,2013-09-26 16:00,,2012-06-02 00:00,2012-06-02 00:00,,,2012-01-22 08:00,2012-01-29 16:00,,,,,PT_Normal,,,,,RDUdVo9da0aQdmy8kTlkMg,P+ALjRxymUWKulYnQG96Og,,,N,0,0,,,2012-06-19 11:46,2012-06-20 10:09,admin,admin
141,144149,5115,22792,6085,1,100,N,N,N,CP_Drtn,TT_Task,DT_FixedDUR2,RV_OK,TK_Complete,4229PHS40,commercial evaluation & bid committee for Heat shrink sleeves,,,,0,0,0,0,80,0,0,0,,2011-12-09 00:00,2011-12-12 00:00,2013-09-26 16:00,2013-09-26 16:00,,2012-06-02 00:00,2012-06-02 00:00,,,2011-12-14 08:00,2011-12-27 16:00,,,,,PT_Normal,,,,,H3o+njbeOk+Zfss0qtIyKA,sKwTyDY27U2BB6/qHgw6OQ,,,N,0,0,,,2012-06-19 11:46,2012-06-20 10:09,admin,admin
142,144150,5115,22792,6085,1,100,N,N,N,CP_Drtn,TT_Task,DT_FixedDUR2,RV_OK,TK_Complete,4229PHS60,F.O.C for Heat shrink sleeves,,,,0,0,0,0,24,0,0,0,,2012-01-04 00:00,2012-01-23 00:00,2013-09-26 16:00,2013-09-26 16:00,,2012-06-02 00:00,2012-06-02 00:00,,,2012-01-03 08:00,2012-01-05 16:00,,,,,PT_Normal,,,,,9EzmRMZY90GoejKk4S8fKg,iXQwi6oD8EyafkjSeVpArg,,,N,0,0,,,2012-06-19 11:46,2012-06-20 10:09,admin,admin
143,144151,5115,22792,6085,1,100,N,N,N,CP_Drtn,TT_Task,DT_FixedDUR2,RV_OK,TK_Complete,4229PHS70,P.O for Heat shrink sleeves,,,,0,0,0,0,40,0,0,0,,2012-01-30 08:00,2012-02-05 16:00,2013-09-26 16:00,2013-09-26 16:00,,2012-06-02 00:00,2012-06-02 00:00,,,2012-01-30 08:00,2012-02-05 16:00,,,,,PT_Normal,,,,,9HcSMKYpx0uFovtQFRTF3w,vcNgRPq2gE2+G9/qjHSUDA,,,N,0,0,,,2012-06-19 11:46,2012-06-20 10:09,admin,admin
144,144152,5115,22792,6085,1,100,N,N,N,CP_Drtn,TT_LOE,DT_FixedDUR2,RV_OK,TK_Complete,A1210,T.E.R for heat shrink sleeves,,,,0,0,0,0,151,0,0,0,,2011-11-03 00:00,2011-12-05 00:00,,,,,,,,2011-12-04 08:00,2011-12-28 15:00,,,,,PT_Normal,,,,,c5ClXssBCEK66BdvD3/Bfg,TRfzN9uTK0OCBl07/0dyfg,,,N,0,0,,,2012-06-19 11:46,2012-06-19 11:46,admin,admin
145,144153,5115,22792,6085,1,100,N,N,N,CP_Drtn,TT_LOE,DT_FixedDUR2,RV_OK,TK_Complete,A1550,MRP for heat shrink sleeves,,,,0,0,0,0,40,0,0,0,,2012-01-24 08:00,2012-01-30 16:00,,,,,,,,2012-01-29 08:00,2012-02-02 16:00,,,,,PT_Normal,,,,,ueVIfvFt+0W9yRK8vc85qQ,5Z/xpS+fjESkAsXx92SJWw,,,N,0,0,,,2012-06-19 11:46,2012-06-19 11:46,admin,admin
146,144154,5115,22793,6086,1,100,N,N,N,CP_Drtn,TT_Task,DT_FixedDrtn,RV_OK,TK_Complete,4229P4220,Bidding for Flanges,,,,0,0,0,0,16,0,0,0,,2011-11-03 00:00,2011-11-28 00:00,2013-07-28 08:00,2013-07-28 08:00,,2012-06-02 00:00,2012-06-02 00:00,,,2011-12-03 08:00,2011-12-04 16:00,,,,,PT_Normal,,,,,+VFz2+luIUC5O7sRij0qlg,4dk1kLWr8Uipwbh1A4uC1Q,,,N,0,0,,,2012-06-19 11:46,2012-06-20 10:09,admin,admin
147,144155,5115,22793,6085,1,100,N,N,N,CP_Drtn,TT_Task,DT_FixedDrtn,RV_OK,TK_Complete,4229PFL30,Receive revised commercial offers for Flanges,,,,0,0,0,0,40,0,0,0,,2012-01-19 00:00,2012-01-24 00:00,2013-07-28 08:00,2013-07-28 08:00,,2012-06-02 00:00,2012-06-02 00:00,,,2012-01-29 08:00,2012-02-02 16:00,,,,,PT_Normal,,,,,jRUEtOz39k2Yc06m3xtQ5g,9VDpY57a3UudBJDUjqJGDQ,,,N,0,0,,,2012-06-19 11:46,2012-06-20 10:09,admin,admin
148,144156,5115,22793,6085,1,100,N,N,N,CP_Drtn,TT_Task,DT_FixedDUR2,RV_OK,TK_Complete,4229PFL10,Issue RFQ for Flanges,,,,0,0,0,0,16,0,0,0,,2011-10-31 00:00,2011-11-02 00:00,2013-07-28 08:00,2013-07-28 08:00,,2012-06-02 00:00,2012-06-02 00:00,,,2011-12-04 08:00,2011-12-05 16:00,,,,,PT_Normal,,,,,XVPx35tYtUS3DI1uoQF7LQ,Ogmu6kUj7USG0/qhOzLW0g,,,N,0,0,,,2012-06-19 11:46,2012-06-20 10:09,admin,admin
149,144157,5115,22793,6086,1,0,N,N,N,CP_Drtn,TT_Task,DT_FixedDUR2,RV_OK,TK_Active,4229PFL90,Fabrication upto R.F.S,,3272,0,144,0,0,0,896,0,0,0,,2012-02-28 00:00,,2013-07-28 08:00,2013-08-14 16:00,,2012-06-02 08:00,2012-06-19 16:00,2012-06-02 08:00,2012-06-19 16:00,2012-03-03 08:00,2012-06-22 16:00,,2013-07-28 08:00,2013-08-14 16:00,,PT_Normal,,,,,M9ekBcHpY0aVFaBhkE9xzw,xpVpHHnMvEKud81vKiQs4w,,,N,0,0,,,2012-06-19 11:46,2012-06-20 09:59,admin,admin
150,144158,5115,22793,6087,1,0,N,N,N,CP_Drtn,TT_Task,DT_FixedDUR2,RV_OK,TK_NotStart,4229PFL100,Delivery upto site,,3616,2024,112,0,0,0,112,0,0,0,,,,2013-09-13 08:00,2013-09-26 16:00,,2012-06-20 08:00,2012-07-03 16:00,2012-06-20 08:00,2012-07-03 16:00,2012-06-20 08:00,2012-07-03 16:00,,2013-09-13 08:00,2013-09-26 16:00,,PT_Normal,,,,,w4kt4b2IskGGw3aua8uCmQ,Tf7vSjkuA0O8+UofbYSmOg,,,N,0,0,,,2012-06-19 11:46,2012-06-20 09:59,admin,admin
151,144159,5115,22793,6085,1,100,N,N,N,CP_Drtn,TT_Task,DT_FixedDUR2,RV_OK,TK_Complete,4229PFL50,Client approval on bid committee reccomendation,,,,0,0,0,0,16,0,0,0,,2012-02-20 08:00,2012-02-21 16:00,2013-07-28 08:00,2013-07-28 08:00,,2012-06-02 00:00,2012-06-02 00:00,,,2012-02-20 08:00,2012-02-21 16:00,,,,,PT_Normal,,,,,u30YGg6YTUWI90qwctSdcw,9aPvfqhTw0CEwcjlUgOBWQ,,,N,0,0,,,2012-06-19 11:46,2012-06-20 10:09,admin,admin
152,144160,5115,22793,6085,1,0,N,N,N,CP_Drtn,TT_Task,DT_FixedDUR2,RV_OK,TK_NotStart,4229PFL80,L.C issued by Gupco,,2640,2640,40,0,0,0,40,0,0,0,,,,2013-09-22 08:00,2013-09-26 16:00,,2012-06-03 08:00,2012-06-07 16:00,2012-06-03 08:00,2012-06-07 16:00,2012-06-03 08:00,2012-06-07 16:00,,2013-09-22 08:00,2013-09-26 16:00,,PT_Normal,,,,,vjeE4gqh20eEb8V7jcVE4w,hju/Z6YvvEKo5Cmbi1YfHw,,,N,0,0,,,2012-06-19 11:46,2012-06-20 09:59,admin,admin
153,144161,5115,22793,6085,1,100,N,N,N,CP_Drtn,TT_Task,DT_FixedDUR2,RV_OK,TK_Complete,4229PFL40,commercial evaluation & bid committee for Flanges,,,,0,0,0,0,80,0,0,0,,2012-01-25 00:00,2012-02-20 00:00,2013-07-28 08:00,2013-07-28 08:00,,2012-06-02 00:00,2012-06-02 00:00,,,2012-02-05 08:00,2012-02-16 16:00,,,,,PT_Normal,,,,,4eQaHngJS0mEtqhQ6QFDMQ,cwhykWHlMECb4uDsvooIkQ,,,N,0,0,,,2012-06-19 11:46,2012-06-20 10:09,admin,admin
154,144162,5115,22793,6085,1,100,N,N,N,CP_Drtn,TT_Task,DT_FixedDUR2,RV_OK,TK_Complete,4229PFL60,F.O.C for Flanges,,,,0,0,0,0,24,0,0,0,,2012-02-22 00:00,2012-02-26 00:00,2013-07-28 08:00,2013-07-28 08:00,,2012-06-02 00:00,2012-06-02 00:00,,,2012-03-04 08:00,2012-03-06 16:00,,,,,PT_Normal,,,,,fLP5II5SfEqd+GWsE/R1Xg,Q9JBxixOMkK0UZXQoQ9l3A,,,N,0,0,,,2012-06-19 11:46,2012-06-20 10:09,admin,admin
155,144163,5115,22793,6085,1,100,N,N,N,CP_Drtn,TT_Task,DT_FixedDUR2,RV_OK,TK_Complete,4229PFL70,P.O for Flanges,,,,0,0,0,0,40,0,0,0,,2012-02-28 00:00,2012-02-28 00:00,2013-07-28 08:00,2013-07-28 08:00,,2012-06-02 00:00,2012-06-02 00:00,,,2012-03-04 08:00,2012-03-08 16:00,,,,,PT_Normal,,,,,La2Yg6gedE+NuPhu3f9iNQ,0JXogbR1gUi8jGuDO8H6zw,,,N,0,0,,,2012-06-19 11:46,2012-06-20 10:09,admin,admin
156,144164,5115,22793,6085,1,100,N,N,N,CP_Drtn,TT_LOE,DT_FixedDUR2,RV_OK,TK_Complete,A1190,T.E.R for flanges,,,,0,0,0,0,160,0,0,0,,2011-12-01 00:00,2012-01-18 16:00,,,,,,,,2011-12-05 08:00,2012-01-01 16:00,,,,,PT_Normal,,,,,jRjt8w8HlUi8pJCNbU2jMg,BTZdt/eNwkmTxOsXDtwf+A,,,N,0,0,,,2012-06-19 11:46,2012-06-19 11:46,admin,admin
157,144165,5115,22793,6085,1,100,N,N,N,CP_Drtn,TT_LOE,DT_FixedDUR2,RV_OK,TK_Complete,A1580,MRP for flanges,,,,0,0,0,0,16,0,0,0,,2012-02-26 00:00,2012-02-27 00:00,,,,,,,,2012-03-07 08:00,2012-03-08 16:00,,,,,PT_Normal,,,,,TmpjuxJl5UuN79LsVU1S2g,rb1Bo9MPykqNAoF60pqpMA,,,N,0,0,,,2012-06-19 11:46,2012-06-19 11:46,admin,admin
158,144166,5115,22789,6086,1,100,N,N,N,CP_Drtn,TT_Task,DT_FixedDrtn,RV_OK,TK_Complete,4229PHB20,Bidding for hot bends,,,,0,0,0,0,200,0,0,0,2011-10-10 00:00,2011-10-10 08:00,2011-10-30 16:00,2013-06-04 08:00,2013-06-04 08:00,,2012-06-02 00:00,2012-06-02 00:00,,,2011-10-10 08:00,2011-11-03 16:00,,,,CS_MSOA,PT_Normal,,,,,X9ZV3PSHwUuajp9B8as6rA,Q7yIZtnDRROY+WyhFyvCjg,,,N,0,0,,,2012-06-19 11:46,2012-06-20 10:09,admin,admin
159,144167,5115,22789,6085,1,100,N,N,N,CP_Drtn,TT_Task,DT_FixedDrtn,RV_OK,TK_Complete,4229PHB30,Receive revised commercial offers for hot bends,,,,0,0,0,0,40,0,0,0,,2011-12-09 00:00,2011-12-28 00:00,2013-06-04 08:00,2013-06-04 08:00,,2012-06-02 00:00,2012-06-02 00:00,,,2011-12-28 08:00,2012-01-03 16:00,,,,,PT_Normal,,,,,lfQ5gfUSykKoJCtp6sBAMA,lshWR38CR9WKmPPoeHu1kw,,,N,0,0,,,2012-06-19 11:46,2012-06-20 10:09,admin,admin
160,144168,5115,22789,6085,1,100,N,N,N,CP_Drtn,TT_Task,DT_FixedDUR2,RV_OK,TK_Complete,4229PHB10,Issue RFQ for hot bends,,,,0,0,0,0,16,0,0,0,,2011-10-09 00:00,2011-10-09 00:00,2013-06-04 08:00,2013-06-04 08:00,,2012-06-02 00:00,2012-06-02 00:00,,,2011-08-15 08:00,2011-08-16 16:00,,,,,PT_Normal,,,,,oqL1A4C3/UC9wOKAK3fHrw,RPisVVpZYky8Ac1mUQPczA,,,N,0,0,,,2012-06-19 11:46,2012-06-20 10:09,admin,admin
161,144169,5115,22789,6086,1,0,N,N,N,CP_Drtn,TT_Task,DT_FixedDUR2,RV_OK,TK_Active,4229PHB100,Fabrication upto R.F.S,,2848,0,624,0,0,0,896,0,0,0,2012-02-09 00:00,2012-04-06 00:00,,2013-06-11 08:00,2013-08-27 16:00,2012-09-05 16:00,2012-06-08 08:00,2012-09-05 16:00,2012-06-08 08:00,2012-09-05 16:00,2012-02-09 08:00,2012-05-30 16:00,,2013-06-11 08:00,2013-08-27 16:00,CS_MSOA,PT_Normal,,,,,87pKsHcZEEqV13Kn1rvAQQ,fKTRcaFxTEmgvZfa7vGZeA,,,N,0,0,,,2012-06-19 11:46,2012-06-20 09:59,admin,admin
162,144170,5115,22789,6087,1,0,N,N,N,CP_Drtn,TT_Task,DT_FixedDUR2,RV_OK,TK_NotStart,4229PHB110,Delivery upto site,,2864,1272,240,0,0,0,240,0,0,0,,,,2013-08-28 08:00,2013-09-26 16:00,,2012-09-06 08:00,2012-10-05 16:00,2012-09-06 08:00,2012-10-05 16:00,2012-09-06 08:00,2012-10-05 16:00,,2013-08-28 08:00,2013-09-26 16:00,,PT_Normal,,,,,xRlxAM/qSEiHjczS52wHIA,JNK95J5kqk2yxXXMkxZF1A,,,N,0,0,,,2012-06-19 11:46,2012-06-20 09:59,admin,admin
163,144171,5115,22789,6085,1,100,N,N,N,CP_Drtn,TT_Task,DT_FixedDUR2,RV_OK,TK_Complete,4229PHB60,Client approval on bid committee reccomendation,,,,0,0,0,0,16,0,0,0,,2012-01-26 08:00,2012-01-31 00:00,2013-06-04 08:00,2013-06-04 08:00,,2012-06-02 00:00,2012-06-02 00:00,,,2012-01-26 08:00,2012-01-29 16:00,,,,,PT_Normal,,,,,fSWAb68jIUinOEmrkfyGcg,Yu1MLBBnZka81lvnYU4ANQ,,,N,0,0,,,2012-06-19 11:46,2012-06-20 10:09,admin,admin
164,144172,5115,22789,6085,1,0,N,N,N,CP_Drtn,TT_Task,DT_FixedDUR2,RV_OK,TK_NotStart,4229PHB90,L.C issued by Gupco,,2016,0,40,0,0,0,40,0,0,0,,,,2013-06-04 08:00,2013-06-10 16:00,,2012-06-03 08:00,2012-06-07 16:00,2012-06-03 08:00,2012-06-07 16:00,2012-06-03 08:00,2012-06-07 16:00,,2013-06-04 08:00,2013-06-10 16:00,,PT_Normal,,,,,HCMToMo5zkeF8QPilpQVoQ,3KZie4yXhUOEEKBN+gqN0g,,,N,0,0,,,2012-06-19 11:46,2012-06-20 09:59,admin,admin
165,144173,5115,22789,6085,1,100,N,N,N,CP_Drtn,TT_Task,DT_FixedDUR2,RV_OK,TK_Complete,4229PHB50,commercial evaluation & bid committee for hot bends,,,,0,0,0,0,80,0,0,0,,2011-12-29 00:00,2012-01-24 00:00,2013-06-04 08:00,2013-06-04 08:00,,2012-06-02 00:00,2012-06-02 00:00,,,2012-01-01 08:00,2012-01-12 16:00,,,,,PT_Normal,,,,,LEMjPn49VEiMLmXm6+PqlA,hxCKOj5MQkO6l3IH5Tvwyg,,,N,0,0,,,2012-06-19 11:46,2012-06-20 10:09,admin,admin
166,144174,5115,22789,6085,1,100,N,N,N,CP_Drtn,TT_Task,DT_FixedDUR2,RV_OK,TK_Complete,4229PHB70,F.O.C for hot bends,,,,0,0,0,0,24,0,0,0,2012-02-01 00:00,2012-04-01 00:00,2012-04-05 00:00,2013-06-04 08:00,2013-06-04 08:00,,2012-06-02 00:00,2012-06-02 00:00,,,2012-02-01 08:00,2012-02-05 16:00,,,,CS_MSOA,PT_Normal,,,,,EkQJgJsIfUKq8/XBuY14OA,Oh5RJQL9XEi3/FRFqbhptw,,,N,0,0,,,2012-06-19 11:46,2012-06-20 10:09,admin,admin
167,144175,5115,22789,6085,1,100,N,N,N,CP_Drtn,TT_Task,DT_FixedDUR2,RV_OK,TK_Complete,4229PHB80,P.O for hot bends,,,,0,0,0,0,40,0,0,0,,2012-04-10 00:00,2012-04-18 00:00,2013-06-04 08:00,2013-06-04 08:00,,2012-06-02 00:00,2012-06-02 00:00,,,2012-03-04 08:00,2012-03-08 16:00,,,,,PT_Normal,,,,,yCvbe4fc1Uu9DrRDD9n3hg,eUz5eXVrNUuJpSqvEaoIPw,,,N,0,0,,,2012-06-19 11:46,2012-06-20 10:09,admin,admin
168,144176,5115,22789,6085,1,100,N,N,N,CP_Drtn,TT_LOE,DT_FixedDUR2,RV_OK,TK_Complete,A1200,T.E.R for hot bends,,,,0,0,0,0,207,0,0,0,,2011-10-30 00:00,2011-12-08 00:00,,,,,,,,2011-12-04 08:00,2012-01-08 15:00,,,,,PT_Normal,,,,,QuJ4MjnenkSXSnM79Sj52w,3s1TUShvtEibPzUOH/ko9w,,,N,0,0,,,2012-06-19 11:46,2012-06-19 11:46,admin,admin
169,144177,5115,22789,6085,1,100,N,N,N,CP_Drtn,TT_LOE,DT_FixedDUR2,RV_OK,TK_Complete,A1560,MRP for hot bends,,,,0,0,0,0,48,0,0,0,,2012-02-09 00:00,2012-02-19 00:00,,,,,,,,2012-02-09 08:00,2012-02-16 16:00,,,,,PT_Normal,,,,,rPPNB6V9tkaXNmkGXo75tg,ihnfO4Deq028lkj8sUs7ag,,,N,0,0,,,2012-06-19 11:46,2012-06-19 11:46,admin,admin
170,144178,5115,22790,6085,1,0,N,N,N,CP_Drtn,TT_Task,DT_FixedDUR2,RV_OK,TK_NotStart,4229PFG80,L.C issued by Gupco,,1856,0,40,0,0,0,40,0,0,0,,,,2013-05-14 08:00,2013-05-20 16:00,,2012-06-10 08:00,2012-06-14 16:00,2012-06-10 08:00,2012-06-14 16:00,2012-06-10 08:00,2012-06-14 16:00,,2013-05-14 08:00,2013-05-20 16:00,,PT_Normal,,,,,P1Ifm0JiNkGO/InPXr2mCg,hw+Nv+hAEEyyL9o5y71GIw,,,N,0,0,,,2012-06-19 11:46,2012-06-20 09:59,admin,admin
171,144179,5115,22790,6085,1,100,N,N,N,CP_Drtn,TT_Task,DT_FixedDUR2,RV_OK,TK_Complete,4229PFG10,Issue RFQ for Fire & gas detectors,,,,0,0,0,0,16,0,0,0,2012-01-10 00:00,2012-01-10 08:00,2012-01-10 16:00,2013-05-07 08:00,2013-05-07 08:00,,2012-06-02 00:00,2012-06-02 00:00,,,2012-01-10 08:00,2012-01-11 16:00,,,,CS_MSOA,PT_Normal,,,,,AEh6I3OI5UuUuXvx01sw6w,I/u8UMyPMEefpVrn15FpHQ,,,N,0,0,,,2012-06-19 11:46,2012-06-20 10:09,admin,admin
172,144180,5115,22790,6086,1,100,N,N,N,CP_Drtn,TT_Task,DT_FixedDUR2,RV_OK,TK_Complete,4229PFG20,Bidding Fire & gas detectors,,,,0,0,0,0,136,0,0,0,,2012-01-11 00:00,2012-02-26 00:00,2013-05-07 08:00,2013-05-07 08:00,,2012-06-02 00:00,2012-06-02 00:00,,,2012-03-03 08:00,2012-03-19 16:00,,,,,PT_Normal,,,,,cV7TN31jJ0yUMYV6Nb+c1g,ZLRqpsT2cUyA6ivDGm5BOw,,,N,0,0,,,2012-06-19 11:46,2012-06-20 10:09,admin,admin
173,144181,5115,22790,6085,1,100,N,N,N,CP_Drtn,TT_Task,DT_FixedDUR2,RV_OK,TK_Complete,4229PFG40,commercial evaluation & bid committee for Fire & gas detectors,,,,0,0,0,0,80,0,0,0,,2012-05-10 00:00,2012-05-13 00:00,2013-05-07 08:00,2013-05-07 08:00,,2012-06-02 00:00,2012-06-02 00:00,,,2012-05-06 08:00,2012-05-17 16:00,,,,,PT_Normal,,,,,XQKGA0/bg0Gq+enyRzOILg,SAfIDt5wDEGyLL3ednrvHw,,,N,0,0,,,2012-06-19 11:46,2012-06-20 10:09,admin,admin
174,144182,5115,22790,6085,1,100,N,N,N,CP_Drtn,TT_Task,DT_FixedDUR2,RV_OK,TK_Complete,4229PFG60,F.O.C for Fire & gas detectors,,,,0,0,0,0,24,0,0,0,,2012-05-17 00:00,2012-05-27 00:00,2013-05-07 08:00,2013-05-07 08:00,,2012-06-02 00:00,2012-06-02 00:00,,,2012-06-10 08:00,2012-06-12 16:00,,,,,PT_Normal,,,,,lUrQ0J+ywkidJCIZkIpAVA,huEuXtvgm0aYteDpKcBTIA,,,N,0,0,,,2012-06-19 11:46,2012-06-20 10:09,admin,admin
175,144183,5115,22790,6085,1,0,N,N,N,CP_Drtn,TT_Task,DT_FixedDUR2,RV_OK,TK_NotStart,4229PFG70,P.O for Fire & gas detectors,,1856,0,40,0,0,0,40,0,0,0,,,,2013-05-07 08:00,2013-05-13 16:00,,2012-06-03 08:00,2012-06-07 16:00,2012-06-03 08:00,2012-06-07 16:00,2012-06-03 08:00,2012-06-07 16:00,,2013-05-07 08:00,2013-05-13 16:00,,PT_Normal,,,,,YtCz1Hn6bkyp9XZEXT3sjA,xCFTiS4W2U+/+XFLdoJJQA,,,N,0,0,,,2012-06-19 11:46,2012-06-20 09:59,admin,admin
176,144184,5115,22790,6086,1,0,N,N,N,CP_Drtn,TT_Task,DT_FixedDUR2,RV_OK,TK_NotStart,4229PFG90,Fabrication upto R.F.S,,2624,0,672,0,0,0,672,0,0,0,,,,2013-05-21 08:00,2013-08-12 16:00,,2012-06-15 08:00,2012-09-18 16:00,2012-06-15 08:00,2012-09-18 16:00,2012-06-15 08:00,2012-09-18 16:00,,2013-05-21 08:00,2013-08-12 16:00,,PT_Normal,,,,,neCY6RWFg0S25o3d7COidw,lrfM1ie8x0u0Y/bHpNUO2Q,,,N,0,0,,,2012-06-19 11:46,2012-06-20 09:59,admin,admin
177,144185,5115,22790,6087,1,0,N,N,N,CP_Drtn,TT_Task,DT_FixedDUR2,RV_OK,TK_NotStart,4229PFG100,Delivery upto site,,2640,1048,360,0,0,0,360,0,0,0,,,,2013-08-13 08:00,2013-09-26 16:00,,2012-09-19 08:00,2012-11-02 16:00,2012-09-19 08:00,2012-11-02 16:00,2012-09-19 08:00,2012-11-02 16:00,,2013-08-13 08:00,2013-09-26 16:00,,PT_Normal,,,,,GyOdJkLTD0KCgwBq57kmbQ,AeL1dzhtuEiobz3qEBUY4w,,,N,0,0,,,2012-06-19 11:46,2012-06-20 09:59,admin,admin
178,144186,5115,22790,6085,1,100,N,N,N,CP_Drtn,TT_Task,DT_FixedDUR2,RV_OK,TK_Complete,4229PFG30,Receive revised commercial offers,,,,0,0,0,0,40,0,0,0,,2012-05-06 00:00,2012-05-10 00:00,2013-05-07 08:00,2013-05-07 08:00,,2012-06-02 00:00,2012-06-02 00:00,,,2012-04-29 08:00,2012-05-03 16:00,,,,,PT_Normal,,,,,VRFYgnpl60y+zxl8qaifnA,eoWA/lEUcEC05WYtMGhXTA,,,N,0,0,,,2012-06-19 11:46,2012-06-20 10:09,admin,admin
179,144187,5115,22790,6085,1,100,N,N,N,CP_Drtn,TT_Task,DT_FixedDUR2,RV_OK,TK_Complete,4229PFG50,Client approval on bid committee reccomendation,,,,0,0,0,0,16,0,0,0,,2012-05-14 00:00,2012-05-16 00:00,2013-05-07 08:00,2013-05-07 08:00,,2012-06-02 00:00,2012-06-02 00:00,,,2012-05-20 08:00,2012-05-21 16:00,,,,,PT_Normal,,,,,6FoZWfjlqkqHqnmRx+n5tQ,ixCnxIpqdU6jVkm7+e6ltA,,,N,0,0,,,2012-06-19 11:46,2012-06-20 10:09,admin,admin
180,144188,5115,22790,6085,1,100,N,N,N,CP_Drtn,TT_LOE,DT_FixedDUR2,RV_OK,TK_Complete,A1060,T.E.R for fire  & Gas detection,,,,0,0,0,0,120,0,0,0,,2012-02-27 00:00,2012-05-03 16:00,,,,,,,,2012-03-20 08:00,2012-04-09 16:00,,,,,PT_Normal,,,,,wZ4vrgcQuUakIQ2kVO8TkA,YQA1cLVr7kqboY01YoRhgw,,,N,0,0,,,2012-06-19 11:46,2012-06-19 11:46,admin,admin
181,144189,5115,22790,6085,1,100,N,N,N,CP_Drtn,TT_LOE,DT_FixedDUR2,RV_OK,TK_Complete,A1340,MRP for fire  & Gas detection,,,,0,0,0,0,40,0,0,0,,2012-05-28 00:00,2012-05-29 00:00,,,,,,,,2012-06-03 08:00,2012-06-07 16:00,,,,,PT_Normal,,,,,51UnotWiRke3Z56D47QzRw,VWzlyCmBNkqx4/itja5tWg,,,N,0,0,,,2012-06-19 11:46,2012-06-19 11:46,admin,admin
182,144190,5115,22810,6085,1,100,N,N,N,CP_Drtn,TT_Task,DT_FixedDUR2,RV_OK,TK_Complete,4229PFG110,Issue RFQ for Life saving equipment,,,,0,0,0,0,16,0,0,0,2012-01-05 00:00,2012-01-05 08:00,2012-01-05 16:00,2013-09-07 08:00,2013-09-07 08:00,,2012-06-02 00:00,2012-06-02 00:00,,,2012-01-05 08:00,2012-01-08 16:00,,,,CS_MSOA,PT_Normal,,,,,F2B3mejWo0G5h9cePbihjQ,UKr6qX7UcEegIWyFsGk/9A,,,N,0,0,,,2012-06-19 11:46,2012-06-20 10:09,admin,admin
183,144191,5115,22810,6086,1,100,N,N,N,CP_Drtn,TT_Task,DT_FixedDUR2,RV_OK,TK_Complete,4229PFG120,Bidding Life saving equipment,,,,0,0,0,0,200,0,0,0,2012-01-09 00:00,2012-01-09 08:00,2012-02-28 00:00,2013-09-07 08:00,2013-09-07 08:00,,2012-06-02 00:00,2012-06-02 00:00,,,2012-01-09 08:00,2012-02-03 16:00,,,,CS_MSOA,PT_Normal,,,,,l6FdEUj9NUCR45uc2SsTfg,z7YUbJQnuUOHHzkwX1ehtw,,,N,0,0,,,2012-06-19 11:46,2012-06-20 10:09,admin,admin
184,144192,5115,22810,6085,1,100,N,N,N,CP_Drtn,TT_Task,DT_FixedDUR2,RV_OK,TK_Complete,4229PFG130,commercial evaluation & bid committee for Life saving equipment,,,,0,0,0,0,80,0,0,0,,2012-05-23 00:00,2012-05-23 00:00,2013-09-07 08:00,2013-09-07 08:00,,2012-06-02 00:00,2012-06-02 00:00,,,2012-06-10 08:00,2012-06-21 16:00,,,,,PT_Normal,,,,,MbQgFRJxmEqG+IFVETAHSw,PJXdORg+x0OWNVOvlFITxQ,,,N,0,0,,,2012-06-19 11:46,2012-06-20 10:09,admin,admin
185,144193,5115,22810,6085,1,100,N,N,N,CP_Drtn,TT_Task,DT_FixedDUR2,RV_OK,TK_Complete,4229PFG140,F.O.C for Life saving equipment,,,,0,0,0,0,24,0,0,0,,2012-05-23 00:00,2012-05-23 00:00,2013-09-07 08:00,2013-09-07 08:00,,2012-06-02 00:00,2012-06-02 00:00,,,2012-06-26 08:00,2012-06-28 16:00,,,,,PT_Normal,,,,,1bNv6d1njkW9TnFv3PAwjw,cuvxyESDG0ibNUht1bd3bA,,,N,0,0,,,2012-06-19 11:46,2012-06-20 10:09,admin,admin
186,144194,5115,22810,6085,1,100,N,N,N,CP_Drtn,TT_Task,DT_FixedDUR2,RV_OK,TK_Complete,4229PFG150,P.O for Life saving equipment,,,,0,0,0,0,40,0,0,0,,2012-05-23 00:00,2012-05-23 00:00,2013-09-07 08:00,2013-09-07 08:00,,2012-06-02 00:00,2012-06-02 00:00,,,2012-07-01 08:00,2012-07-05 16:00,,,,,PT_Normal,,,,,OkEq1tKnbU+rGsaFZoEQgA,vV4hpMERQ0OLYMdtF2Z0WA,,,N,0,0,,,2012-06-19 11:46,2012-06-20 10:09,admin,admin
187,144195,5115,22810,6086,1,100,N,N,N,CP_Drtn,TT_Task,DT_FixedDUR2,RV_OK,TK_Complete,4229PFG160,Fabrication upto R.F.S,,,,0,0,0,0,720,0,0,0,,2012-05-23 00:00,2012-05-23 00:00,2013-09-07 08:00,2013-09-07 08:00,,2012-06-02 00:00,2012-06-02 00:00,,,2012-07-13 08:00,2012-10-22 16:00,,,,,PT_Normal,,,,,PdFg5vz8NU2VBif9hT9dnQ,OoxE0JkxKkCu2N33uSQ1Fw,,,N,0,0,,,2012-06-19 11:46,2012-06-20 10:09,admin,admin
188,144196,5115,22810,6087,1,100,N,N,N,CP_Drtn,TT_Task,DT_FixedDUR2,RV_OK,TK_Complete,4229PFG170,Delivery upto site,,,,0,0,0,0,360,0,0,0,,2012-05-23 00:00,2012-05-23 00:00,2013-09-26 16:00,2013-09-26 16:00,,2012-06-02 00:00,2012-06-02 00:00,,,2012-10-23 08:00,2012-12-06 16:00,,,,,PT_Normal,,,,,y/0pziKeNEuw0ucWafpueQ,5zvjC/YRZUiSNCXmEx7ZuA,,,N,0,0,,,2012-06-19 11:46,2012-06-20 10:09,admin,admin
189,144197,5115,22810,6085,1,100,N,N,N,CP_Drtn,TT_Task,DT_FixedDUR2,RV_OK,TK_Complete,4229PFG180,Receive revised commercial offers,,,,0,0,0,0,40,0,0,0,,2012-05-23 00:00,2012-05-23 00:00,2013-09-07 08:00,2013-09-07 08:00,,2012-06-02 00:00,2012-06-02 00:00,,,2012-06-03 08:00,2012-06-07 16:00,,,,,PT_Normal,,,,,0y5jUY0ivkiiHCQkq64oUw,pvN2oyXK60mHUF+ERGrRZw,,,N,0,0,,,2012-06-19 11:46,2012-06-20 10:09,admin,admin
190,144198,5115,22810,6085,1,100,N,N,N,CP_Drtn,TT_Task,DT_FixedDUR2,RV_OK,TK_Complete,4229PFG190,Client approval on bid committee reccomendation,,,,0,0,0,0,16,0,0,0,,2012-05-23 00:00,2012-05-23 00:00,2013-09-07 08:00,2013-09-07 08:00,,2012-06-02 00:00,2012-06-02 00:00,,,2012-06-24 08:00,2012-06-25 16:00,,,,,PT_Normal,,,,,8lVHeKU71UG2g1lD0pIBDw,5M0rSpuH2U+gba7WQIPYBA,,,N,0,0,,,2012-06-19 11:46,2012-06-20 10:09,admin,admin
191,144199,5115,22810,6085,1,100,N,N,N,CP_Drtn,TT_Task,DT_FixedDUR2,RV_OK,TK_Complete,4229PFG200,L.C issued by Gupco,,,,0,0,0,0,40,0,0,0,,2012-05-23 00:00,2012-05-23 00:00,2013-09-07 08:00,2013-09-07 08:00,,2012-06-02 00:00,2012-06-02 00:00,,,2012-07-08 08:00,2012-07-12 16:00,,,,,PT_Normal,,,,,Z/orRZcqOkm8OkeYPZ/Xmg,aN9tdSzSMESH0+5c2wlgeg,,,N,0,0,,,2012-06-19 11:46,2012-06-20 10:09,admin,admin
192,144200,5115,22810,6085,1,100,N,N,N,CP_Drtn,TT_LOE,DT_FixedDrtn,RV_OK,TK_Complete,A1070,T.E.R for life saving equipment,,,,0,0,0,0,120,0,0,0,,2012-02-15 00:00,2012-05-15 00:00,,,,,,,,2012-03-04 08:00,2012-03-22 16:00,,,,,PT_Normal,,,,,2TIop9lj0UOMDDaTbAYEjg,Bv3JjrxMAEuiSippF7wBNA,,,N,0,0,,,2012-06-19 11:46,2012-06-19 11:46,admin,admin
193,144201,5115,22810,6085,1,100,N,N,N,CP_Drtn,TT_LOE,DT_FixedDUR2,RV_OK,TK_Complete,A1350,MRP for life saving equipment,,,,0,0,0,0,0,0,0,0,,2012-05-15 00:00,2012-05-15 00:00,,,,,,,,2012-05-15 08:00,2012-05-15 08:00,,,,,PT_Normal,,,,,5p+9holeSEGMC8MOfhsdhA,72VeZLjSwkmd6bFuzJS8sg,,,N,0,0,,,2012-06-19 11:46,2012-06-19 11:46,admin,admin
194,144202,5115,22811,6085,1,100,N,N,N,CP_Drtn,TT_Task,DT_FixedDUR2,RV_OK,TK_Complete,4229PCP30,Receive revised commercial offers,,,,0,0,0,0,40,0,0,0,,2011-12-28 00:00,2012-01-15 00:00,2013-08-06 08:00,2013-08-06 08:00,,2012-06-02 00:00,2012-06-02 00:00,,,2012-01-01 08:00,2012-01-05 16:00,,,,,PT_Normal,,,,,K1U2V8ukyEKhowSrFkoRyg,rsbY6IPE9Ey3ZU3ZNeLLVg,,,N,0,0,,,2012-06-19 11:46,2012-06-20 10:09,admin,admin
195,144203,5115,22811,6085,1,100,N,N,N,CP_Drtn,TT_Task,DT_FixedDUR2,RV_OK,TK_Complete,4229PCP50,Client approval on bid committee reccommendation,,,,0,0,0,0,16,0,0,0,,2012-02-09 00:00,2012-02-20 00:00,2013-08-06 08:00,2013-08-06 08:00,,2012-06-02 00:00,2012-06-02 00:00,,,2012-03-18 08:00,2012-03-19 16:00,,,,,PT_Normal,,,,,lUWWoKcZIkiKH/1Pg/flsg,iKP7vyvUVkGYjFWGXsYtWw,,,N,0,0,,,2012-06-19 11:46,2012-06-20 10:09,admin,admin
196,144204,5115,22811,6085,1,0,N,N,N,CP_Drtn,TT_Task,DT_FixedDUR2,RV_OK,TK_NotStart,4229PCP80,L.C issued by Gupco,,2376,0,40,0,0,0,40,0,0,0,,,,2013-08-06 08:00,2013-08-12 16:00,,2012-06-03 08:00,2012-06-07 16:00,2012-06-03 08:00,2012-06-07 16:00,2012-06-03 08:00,2012-06-07 16:00,,2013-08-06 08:00,2013-08-12 16:00,,PT_Normal,,,,,a56Qga9Rzkmpx55CYPPz7Q,/xqtBKQ3QEuTmEP+B+vEag,,,N,0,0,,,2012-06-19 11:46,2012-06-20 09:59,admin,admin
197,144205,5115,22811,6085,1,100,N,N,N,CP_Drtn,TT_Task,DT_FixedDUR2,RV_OK,TK_Complete,4229PCP10,Issue RFQ for Cathodic protection,,,,0,0,0,0,16,0,0,0,,2011-10-26 00:00,2011-10-26 00:00,2013-08-06 08:00,2013-08-06 08:00,,2012-06-02 00:00,2012-06-02 00:00,,,2011-10-30 08:00,2011-10-31 16:00,,,,,PT_Normal,,,,,NaPQbJOCGkG0XMU6RkFNsA,iEmal3hge0uAij6Wk9qVTQ,,,N,0,0,,,2012-06-19 11:46,2012-06-20 10:09,admin,admin
198,144206,5115,22811,6086,1,100,N,N,N,CP_Drtn,TT_Task,DT_FixedDUR2,RV_OK,TK_Complete,4229PCP20,Bidding for Cathodic protection,,,,0,0,0,0,200,0,0,0,,2011-10-27 00:00,2011-11-24 00:00,2013-08-06 08:00,2013-08-06 08:00,,2012-06-02 00:00,2012-06-02 00:00,,,2011-11-17 08:00,2011-12-11 16:00,,,,,PT_Normal,,,,,rRsbPOArt0uDTROi06nKhw,x88PzjMZV0GiGu49qJdzgw,,,N,0,0,,,2012-06-19 11:46,2012-06-20 10:09,admin,admin
199,144207,5115,22811,6085,1,100,N,N,N,CP_Drtn,TT_Task,DT_FixedDUR2,RV_OK,TK_Complete,4229PCP40,Commercial evaluation & bid committee for Cathodic protection,,,,0,0,0,0,80,0,0,0,,2012-01-16 00:00,2012-01-23 00:00,2013-08-06 08:00,2013-08-06 08:00,,2012-06-02 00:00,2012-06-02 00:00,,,2012-01-09 08:00,2012-01-22 16:00,,,,,PT_Normal,,,,,1OhpKjmDnUeWBKbpd7wVRQ,ZFrWAGC2TE+1R7WsidTdYQ,,,N,0,0,,,2012-06-19 11:46,2012-06-20 10:09,admin,admin
200,144208,5115,22811,6085,1,100,N,N,N,CP_Drtn,TT_Task,DT_FixedDUR2,RV_OK,TK_Complete,4229PCP60,F.O.C for Cathodic protection,,,,0,0,0,0,24,0,0,0,,2012-02-21 00:00,2012-02-26 00:00,2013-08-06 08:00,2013-08-06 08:00,,2012-06-02 00:00,2012-06-02 00:00,,,2012-03-20 08:00,2012-03-22 16:00,,,,,PT_Normal,,,,,FLkbumvLLUy3a+52oyIRDg,plWp9w3MSEaEBD3XTKD6uw,,,N,0,0,,,2012-06-19 11:46,2012-06-20 10:09,admin,admin
201,144209,5115,22811,6085,1,100,N,N,N,CP_Drtn,TT_Task,DT_FixedDUR2,RV_OK,TK_Complete,4229PCP70,P.O for Cathodic protection,,,,0,0,0,0,40,0,0,0,,2012-02-29 00:00,2012-03-01 00:00,2013-08-06 08:00,2013-08-06 08:00,,2012-06-02 00:00,2012-06-02 00:00,,,2012-03-04 08:00,2012-03-08 16:00,,,,,PT_Normal,,,,,/rcAkQ6zDEmFPFP1y8u13w,XKuDtF9Y5kyIjE3UFTFzuw,,,N,0,0,,,2012-06-19 11:46,2012-06-20 10:09,admin,admin
202,144210,5115,22811,6086,1,100,N,N,N,CP_Drtn,TT_Task,DT_FixedDUR2,RV_OK,TK_Complete,4229PCP90,Fabrication upto R.F.S,,,,0,0,0,0,560,0,0,0,,2012-02-26 00:00,2012-05-28 00:00,2013-08-13 08:00,2013-08-13 08:00,,2012-06-07 16:00,2012-06-07 16:00,,,2012-03-14 08:00,2012-05-22 16:00,,,,,PT_Normal,,,,,4QhCxhXRH0qU1X2GqzvoPA,erBLKNm/ZUeEO9HJpLgTjg,,,N,0,0,,,2012-06-19 11:46,2012-06-20 10:09,admin,admin
203,144211,5115,22811,6087,1,0,N,N,N,CP_Drtn,TT_Task,DT_FixedDUR2,RV_OK,TK_Active,4229PCP100,Delivery upto site,,3464,1872,360,0,0,0,360,0,0,0,,2012-05-29 00:00,,2013-08-13 08:00,2013-09-26 16:00,,2012-06-08 08:00,2012-07-22 16:00,2012-06-08 08:00,2012-07-22 16:00,2012-06-08 08:00,2012-07-22 16:00,,2013-08-13 08:00,2013-09-26 16:00,,PT_Normal,,,,,0lISH+ZvcEuCqYrNUwIyqA,PvZx3hz21kCQaaYCBE4F/Q,,,N,0,0,,,2012-06-19 11:46,2012-06-20 09:59,admin,admin
204,144212,5115,22811,6085,1,100,N,N,N,CP_Drtn,TT_LOE,DT_FixedDrtn,RV_OK,TK_Complete,A1120,T.E.R for cathodic protection,,,,0,0,0,0,151,0,0,0,,2011-11-24 00:00,2011-12-27 00:00,,,,,,,,2011-12-04 08:00,2011-12-28 15:00,,,,,PT_Normal,,,,,qUu/UmxucUaMQ00aiZZA5g,3KXa9cqK30u8RebBmL/QDw,,,N,0,0,,,2012-06-19 11:46,2012-06-19 11:46,admin,admin
205,144213,5115,22811,6085,1,100,N,N,N,CP_Drtn,TT_LOE,DT_FixedDUR2,RV_OK,TK_Complete,A1390,MRP for cathodic protection,,,,0,0,0,0,40,0,0,0,,2012-02-27 00:00,2012-02-28 00:00,,,,,,,,2012-03-04 08:00,2012-03-08 16:00,,,,,PT_Normal,,,,,UJjsH04OVUKrSG4B8UR3pQ,i8D5fIZvpke+0Tb8UUxLPw,,,N,0,0,,,2012-06-19 11:46,2012-06-19 11:46,admin,admin
206,144214,5115,22812,6085,1,100,N,N,N,CP_Drtn,TT_Task,DT_FixedDUR2,RV_OK,TK_Complete,4229PFF110,Re-issue RFQ for Fire Fighting,,,,0,0,0,0,8,0,0,0,,2012-03-01 00:00,2012-03-03 00:00,2013-03-07 08:00,2013-03-07 08:00,,2012-06-02 00:00,2012-06-02 00:00,,,2012-04-29 08:00,2012-04-29 16:00,,,,,PT_Normal,,,,,Tu87X/4/I0G5+Q/D5e5toA,,,,N,0,0,,,2012-06-19 11:46,2012-06-20 10:09,admin,admin
207,144215,5115,22812,6085,1,0,N,N,N,CP_Drtn,TT_Task,DT_FixedDUR2,RV_OK,TK_Active,4229PFF30,Receive revised commercial offers,,1512,0,24,0,0,0,40,0,0,0,,2012-05-30 00:00,,2013-03-07 08:00,2013-03-11 16:00,,2012-06-03 08:00,2012-06-05 16:00,2012-06-03 08:00,2012-06-05 16:00,2012-06-03 08:00,2012-06-07 16:00,,2013-03-07 08:00,2013-03-11 16:00,,PT_Normal,,,,,5SsXxrNvfUqwMH6WisMQUw,AYPNiDXaKE6RLh7mqlxUcQ,,,N,0,0,,,2012-06-19 11:46,2012-06-20 09:59,admin,admin
208,144216,5115,22812,6085,1,0,N,N,N,CP_Drtn,TT_Task,DT_FixedDUR2,RV_OK,TK_NotStart,4229PFF50,Client approval on bid committee reccomendation,,1512,0,16,0,0,0,16,0,0,0,,,,2013-03-26 08:00,2013-03-27 16:00,,2012-06-20 08:00,2012-06-21 16:00,2012-06-20 08:00,2012-06-21 16:00,2012-06-20 08:00,2012-06-21 16:00,,2013-03-26 08:00,2013-03-27 16:00,,PT_Normal,,,,,BLP7DDzZ3USVrWQga9nK6Q,okMlSxQPlUu8ymqN/KtiYQ,,,N,0,0,,,2012-06-19 11:46,2012-06-20 09:59,admin,admin
209,144217,5115,22812,6085,1,0,N,N,N,CP_Drtn,TT_Task,DT_FixedDUR2,RV_OK,TK_NotStart,4229PFF80,L.C issued by Gupco,,1512,0,40,0,0,0,40,0,0,0,,,,2013-04-16 08:00,2013-04-22 16:00,,2012-07-11 08:00,2012-07-17 16:00,2012-07-11 08:00,2012-07-17 16:00,2012-07-11 08:00,2012-07-17 16:00,,2013-04-16 08:00,2013-04-22 16:00,,PT_Normal,,,,,791U1mhPlE6qylKA0oTEKA,8XeEO//CcEKYVr5WUWm1nw,,,N,0,0,,,2012-06-19 11:46,2012-06-20 09:59,admin,admin
210,144218,5115,22812,6085,1,100,N,N,N,CP_Drtn,TT_Task,DT_FixedDUR2,RV_OK,TK_Complete,4229PFF10,Issue RFQ for Fire fighting,,,,0,0,0,0,16,0,0,0,2012-01-09 00:00,2012-01-09 08:00,2012-01-10 16:00,2013-03-07 08:00,2013-03-07 08:00,,2012-06-02 00:00,2012-06-02 00:00,,,2012-01-09 08:00,2012-01-10 16:00,,,,CS_MSOA,PT_Normal,,,,,446hVJerb0uubAbae/6F1Q,JI5SVA605USWDWBKpsEVTw,,,N,0,0,,,2012-06-19 11:46,2012-06-20 10:09,admin,admin
211,144219,5115,22812,6087,1,0,N,N,N,CP_Drtn,TT_Task,DT_FixedDUR2,RV_OK,TK_NotStart,4229PFF100,Delivery upto site,,2152,560,360,0,0,0,360,0,0,0,,,,2013-08-13 08:00,2013-09-26 16:00,,2012-11-19 08:00,2013-01-01 00:00,2012-11-19 08:00,2013-01-01 00:00,2012-11-19 08:00,2013-01-01 00:00,,2013-08-13 08:00,2013-09-26 16:00,,PT_Normal,,,,,yAVXnt3EjE+gqqwaIVtfhg,WLZv2gJavUGvjngHCiSujQ,,,N,0,0,,,2012-06-19 11:46,2012-06-20 09:59,admin,admin
212,144220,5115,22812,6086,1,100,N,N,N,CP_Drtn,TT_Task,DT_FixedDUR2,RV_OK,TK_Complete,4229PFF20,Bidding for Fire fighting,,,,0,0,0,0,160,0,0,0,2012-01-11 00:00,2012-03-04 00:00,2012-04-03 00:00,2013-03-07 08:00,2013-03-07 08:00,,2012-06-02 00:00,2012-06-02 00:00,,,2012-01-11 08:00,2012-01-31 16:00,,,,CS_MSOA,PT_Normal,,,,,ju7yx3tJGUW6SHyLPvoS7g,9MnOz/vVdkC9ctNWH2r8qg,,,N,0,0,,,2012-06-19 11:46,2012-06-20 10:09,admin,admin
213,144221,5115,22812,6085,1,0,N,N,N,CP_Drtn,TT_Task,DT_FixedDUR2,RV_OK,TK_NotStart,4229PFF40,commercial evaluation & bid committee for Fire fighting,,1512,0,80,0,0,0,80,0,0,0,,,,2013-03-12 08:00,2013-03-25 16:00,,2012-06-06 08:00,2012-06-19 16:00,2012-06-06 08:00,2012-06-19 16:00,2012-06-06 08:00,2012-06-19 16:00,,2013-03-12 08:00,2013-03-25 16:00,,PT_Normal,,,,,krRLYyHMhUm39hxDUf1V4A,HB71H4gGzEi8k5nywomlQQ,,,N,0,0,,,2012-06-19 11:46,2012-06-20 09:59,admin,admin
214,144222,5115,22812,6085,1,0,N,N,N,CP_Drtn,TT_Task,DT_FixedDUR2,RV_OK,TK_NotStart,4229PFF60,F.O.C for Fire fighting,,1512,0,24,0,0,0,24,0,0,0,,,,2013-03-28 08:00,2013-04-01 16:00,,2012-06-24 08:00,2012-06-26 16:00,2012-06-24 08:00,2012-06-26 16:00,2012-06-24 08:00,2012-06-26 16:00,,2013-03-28 08:00,2013-04-01 16:00,,PT_Normal,,,,,tVRZ62e560+c85xu3Y5/2Q,FKG5q0XubUmv7n25cBnM+A,,,N,0,0,,,2012-06-19 11:46,2012-06-20 09:59,admin,admin
215,144223,5115,22812,6085,1,0,N,N,N,CP_Drtn,TT_Task,DT_FixedDUR2,RV_OK,TK_NotStart,4229PFF70,P.O for Fire fighting,,1512,0,40,0,0,0,40,0,0,0,,,,2013-04-09 08:00,2013-04-15 16:00,,2012-07-04 08:00,2012-07-10 16:00,2012-07-04 08:00,2012-07-10 16:00,2012-07-04 08:00,2012-07-10 16:00,,2013-04-09 08:00,2013-04-15 16:00,,PT_Normal,,,,,vTFCYF7a50+fivlLrw/aZw,3CKBmFUDZUiNIm/ll8DEwg,,,N,0,0,,,2012-06-19 11:46,2012-06-20 09:59,admin,admin
216,144224,5115,22812,6086,1,0,N,N,N,CP_Drtn,TT_Task,DT_FixedDUR2,RV_OK,TK_NotStart,4229PFF90,Fabrication upto R.F.S,,2136,0,896,0,0,0,896,0,0,0,,,,2013-04-23 08:00,2013-08-12 16:00,,2012-07-18 08:00,2012-11-18 16:00,2012-07-18 08:00,2012-11-18 16:00,2012-07-18 08:00,2012-11-18 16:00,,2013-04-23 08:00,2013-08-12 16:00,,PT_Normal,,,,,g61oTuK/qEulTIFZ5SR3uw,CqIGa1jDK0i2r+exE2hpBg,,,N,0,0,,,2012-06-19 11:46,2012-06-20 09:59,admin,admin
217,144225,5115,22812,6085,1,100,N,N,N,CP_Drtn,TT_LOE,DT_FixedDUR2,RV_OK,TK_Complete,A1050,T.E.R for fire fighting system,,,,0,0,0,0,168,0,0,0,,2012-04-03 08:00,2012-05-29 00:00,,,,,,,,2012-04-03 08:00,2012-05-01 16:00,,,,,PT_Normal,,,,,zumLGZdHDEq0V5jH1UZznw,hYdf5c4+n0uSjfwTIJSUbQ,,,N,0,0,,,2012-06-19 11:46,2012-06-19 11:46,admin,admin
218,144226,5115,22812,6085,1,0,N,N,N,CP_Drtn,TT_LOE,DT_FixedDUR2,RV_OK,TK_NotStart,A1330,MRP for fire fighting system,,1512,0,40,0,0,0,40,0,0,0,,,,2013-04-02 08:00,2013-04-08 16:00,,2012-06-27 08:00,2012-07-03 16:00,2012-06-27 08:00,2012-07-03 16:00,2012-06-27 08:00,2012-07-03 16:00,,2013-04-02 08:00,2013-04-08 16:00,,PT_Normal,,,,,5B5p/ERCd0extseKNV8HeA,op1JmMtlF0SUYLP8Ya3S/A,,,N,0,0,,,2012-06-19 11:46,2012-06-20 10:09,admin,admin
219,144227,5115,22813,6085,1,100,N,N,N,CP_Drtn,TT_Task,DT_FixedDUR2,RV_OK,TK_Complete,4229PTR30,Receive revised commercial offers,,,,0,0,0,0,40,0,0,0,,2011-12-05 00:00,2011-12-11 00:00,2012-12-30 08:00,2012-12-30 08:00,,2012-06-02 00:00,2012-06-02 00:00,,,2012-01-01 08:00,2012-01-05 16:00,,,,,PT_Normal,,,,,S8rVuA1/MUqBxkyFLwof+w,AYPNiDXaKE6RLh7mqlxUcQ,,,N,0,0,,,2012-06-19 11:46,2012-06-20 10:09,admin,admin
220,144228,5115,22813,6085,1,100,N,N,N,CP_Drtn,TT_Task,DT_FixedDUR2,RV_OK,TK_Complete,4229PTR50,Client approval on bid committee reccomendation,,,,0,0,0,0,16,0,0,0,,2011-12-25 00:00,2012-01-31 00:00,2012-12-30 08:00,2012-12-30 08:00,,2012-06-02 00:00,2012-06-02 00:00,,,2012-01-22 08:00,2012-01-23 16:00,,,,,PT_Normal,,,,,TykGWC5gNkWRaxhYnNpR1A,okMlSxQPlUu8ymqN/KtiYQ,,,N,0,0,,,2012-06-19 11:46,2012-06-20 10:09,admin,admin
221,144229,5115,22813,6085,1,0,N,N,N,CP_Drtn,TT_Task,DT_FixedDUR2,RV_OK,TK_Active,4229PTR80,L.C issued by Gupco,,1120,0,8,0,0,0,40,0,0,0,,2012-02-22 00:00,,2012-12-30 08:00,2012-12-30 16:00,,2012-06-03 08:00,2012-06-03 16:00,2012-06-03 08:00,2012-06-03 16:00,2012-03-04 08:00,2012-03-08 16:00,,2012-12-30 08:00,2012-12-30 16:00,,PT_Normal,,,,,IlrwFdWbxEy+HVrpXu39iw,8XeEO//CcEKYVr5WUWm1nw,,,N,0,0,,,2012-06-19 11:46,2012-06-20 09:59,admin,admin
222,144230,5115,22813,6085,1,100,N,N,N,CP_Drtn,TT_Task,DT_FixedDUR2,RV_OK,TK_Complete,4229PTR10,Issue RFQ for L&R traps,,,,0,0,0,0,16,0,0,0,,2011-08-23 08:00,2011-08-25 00:00,2012-12-30 08:00,2012-12-30 08:00,,2012-06-02 00:00,2012-06-02 00:00,,,2011-08-23 08:00,2011-08-24 16:00,,,,,PT_Normal,,,,,5g233NO4DkSYqF7QlwiN0w,32IZnXTP7UyV6zFdZX+PkQ,,,N,0,0,,,2012-06-19 11:46,2012-06-20 10:09,admin,admin
223,144231,5115,22813,6086,1,100,N,N,N,CP_Drtn,TT_Task,DT_FixedDUR2,RV_OK,TK_Complete,4229PTR20,Bidding for L&R traps,,,,0,0,0,0,224,0,0,0,,2011-08-26 00:00,2011-09-19 00:00,2012-12-30 08:00,2012-12-30 08:00,,2012-06-02 00:00,2012-06-02 00:00,,,2011-08-25 08:00,2011-09-21 16:00,,,,,PT_Normal,,,,,HsDlv34sd0mgyalVJYgGTg,kJ0A+WVz+Eey0qSlfjfY1w,,,N,0,0,,,2012-06-19 11:46,2012-06-20 10:09,admin,admin
224,144232,5115,22813,6085,1,100,N,N,N,CP_Drtn,TT_Task,DT_FixedDUR2,RV_OK,TK_Complete,4229PTR40,commercial evaluation & bid committee for L&R traps,,,,0,0,0,0,80,0,0,0,,2011-12-12 00:00,2011-12-22 00:00,2012-12-30 08:00,2012-12-30 08:00,,2012-06-02 00:00,2012-06-02 00:00,,,2012-01-08 08:00,2012-01-19 16:00,,,,,PT_Normal,,,,,RBW6r84D+kWz9WYp1vDoRw,4tj9gre8xECDJFXRMB/KMQ,,,N,0,0,,,2012-06-19 11:46,2012-06-20 10:09,admin,admin
225,144233,5115,22813,6085,1,100,N,N,N,CP_Drtn,TT_Task,DT_FixedDUR2,RV_OK,TK_Complete,4229PTR60,F.O.C for L&R traps,,,,0,0,0,0,24,0,0,0,,2012-02-01 00:00,2012-02-08 00:00,2012-12-30 08:00,2012-12-30 08:00,,2012-06-02 00:00,2012-06-02 00:00,,,2012-03-06 08:00,2012-03-08 16:00,,,,,PT_Normal,,,,,dVX8crqQ+0iDlnQycQ4vkw,mY9xW1A1UUOQ/dWkE7HdGw,,,N,0,0,,,2012-06-19 11:46,2012-06-20 10:09,admin,admin
226,144234,5115,22813,6085,1,100,N,N,N,CP_Drtn,TT_Task,DT_FixedDUR2,RV_OK,TK_Complete,4229PTR70,P.O for L&R traps,,,,0,0,0,0,16,0,0,0,,2012-02-20 00:00,2012-02-21 00:00,2012-12-30 08:00,2012-12-30 08:00,,2012-06-02 00:00,2012-06-02 00:00,,,2012-03-04 08:00,2012-03-05 16:00,,,,,PT_Normal,,,,,pLdY/6WYSUiOo5U+kjzajg,AGbFlgdHtUaygmOdjbChJA,,,N,0,0,,,2012-06-19 11:46,2012-06-20 10:09,admin,admin
227,144235,5115,22813,6086,1,0,N,N,N,CP_Drtn,TT_Task,DT_FixedDUR2,RV_OK,TK_Active,4229PTR90,Fabrication upto R.F.S,,1584,0,984,0,0,0,1288,0,0,0,,2012-02-22 00:00,,2012-12-31 08:00,2013-05-02 16:00,,2012-06-04 08:00,2012-10-16 16:00,2012-06-04 08:00,2012-10-16 16:00,2012-03-05 08:00,2012-08-12 16:00,,2012-12-31 08:00,2013-05-02 16:00,,PT_Normal,,,,,vz7zT/a0QEGNxayePYeJZg,GVaPG4kl40KJCTAmiH7BtQ,,,N,0,0,,,2012-06-19 11:46,2012-06-20 09:59,admin,admin
228,144236,5115,22813,6087,1,0,N,N,N,CP_Drtn,TT_Task,DT_FixedDUR2,RV_OK,TK_NotStart,4229PTR100,Delivery upto site,,2720,1128,56,0,0,0,56,0,0,0,,,,2013-09-20 08:00,2013-09-26 16:00,,2012-10-17 08:00,2012-10-23 16:00,2012-10-17 08:00,2012-10-23 16:00,2012-10-17 08:00,2012-10-23 16:00,,2013-09-20 08:00,2013-09-26 16:00,,PT_Normal,,,,,HnE68bjQQEWe7Y+Go05W9w,5ZdU8uO76kyqCb4bfEYLKw,,,N,0,0,,,2012-06-19 11:46,2012-06-20 09:59,admin,admin
229,144237,5115,22813,6085,1,100,N,N,N,CP_Drtn,TT_LOE,DT_FixedDUR2,RV_OK,TK_Complete,A1080,T.E.R for L&R,,,,0,0,0,0,120,0,0,0,,2011-09-22 08:00,2011-12-04 08:00,,,,,,,,2011-09-22 08:00,2011-10-13 16:00,,,,,PT_Normal,,,,,VaEMwQSoO0CO/PzHLnWw8Q,XRyO7VMwTE+DF2zubFzqvw,,,N,0,0,,,2012-06-19 11:46,2012-06-19 11:46,admin,admin
230,144238,5115,22813,6085,1,100,N,N,N,CP_Drtn,TT_LOE,DT_FixedDUR2,RV_OK,TK_Complete,A1360,MRP for L&R,,,,0,0,0,0,40,0,0,0,,2012-02-09 00:00,2012-02-19 00:00,,,,,,,,2012-03-04 08:00,2012-03-08 16:00,,,,,PT_Normal,,,,,jl38K88cBkOBkTvXXIO98w,A5W8mGd6BE2UO+cKbloHZw,,,N,0,0,,,2012-06-19 11:46,2012-06-19 11:46,admin,admin
231,144239,5115,22814,6085,1,0,N,N,N,CP_Drtn,TT_Task,DT_FixedDUR2,RV_OK,TK_NotStart,4229PRS40,commercial evaluation & bid committee for Radar system,,1392,0,80,0,0,0,80,0,0,0,,,,2013-04-23 08:00,2013-05-06 16:00,,2012-08-08 08:00,2012-08-28 16:00,2012-08-08 08:00,2012-08-28 16:00,2012-08-08 08:00,2012-08-28 16:00,,2013-04-23 08:00,2013-05-06 16:00,,PT_Normal,,,,,05ksjvGn2E6+Fp2eAJ5k4A,MPqcdsw9S6W2dXlu07dRzw,,,N,0,0,,,2012-06-19 11:46,2012-06-20 09:59,admin,admin
232,144240,5115,22814,6085,1,0,N,N,N,CP_Drtn,TT_Task,DT_FixedDUR2,RV_OK,TK_NotStart,4229PRS60,F.O.C for  Radar system,,1392,0,24,0,0,0,24,0,0,0,,,,2013-05-09 08:00,2013-05-13 16:00,,2012-09-02 08:00,2012-09-04 16:00,2012-09-02 08:00,2012-09-04 16:00,2012-09-02 08:00,2012-09-04 16:00,,2013-05-09 08:00,2013-05-13 16:00,,PT_Normal,,,,,s9yA5c/3WUeKCaMrmDYxBA,8bhvNgcsRzunguxdp4ysfg,,,N,0,0,,,2012-06-19 11:46,2012-06-20 09:59,admin,admin
233,144241,5115,22814,6085,1,0,N,N,N,CP_Drtn,TT_Task,DT_FixedDUR2,RV_OK,TK_NotStart,4229PRS70,P.O for Radar system,,1392,0,16,0,0,0,16,0,0,0,,,,2013-05-21 08:00,2013-05-22 16:00,,2012-09-12 08:00,2012-09-13 16:00,2012-09-12 08:00,2012-09-13 16:00,2012-09-12 08:00,2012-09-13 16:00,,2013-05-21 08:00,2013-05-22 16:00,,PT_Normal,,,,,I3+d5PBp5U6H75KNzPuMTQ,iGsAl0jiSTe9wP87ple5+A,,,N,0,0,,,2012-06-19 11:46,2012-06-20 09:59,admin,admin
234,144242,5115,22814,6086,1,0,N,N,N,CP_Drtn,TT_Task,DT_FixedDUR2,RV_OK,TK_NotStart,4229PRS90,Fabrication upto R.F.S,,2008,0,720,0,0,0,720,0,0,0,,,,2013-05-30 08:00,2013-08-27 16:00,,2012-09-21 08:00,2012-12-19 16:00,2012-09-21 08:00,2012-12-19 16:00,2012-09-21 08:00,2012-12-19 16:00,,2013-05-30 08:00,2013-08-27 16:00,,PT_Normal,,,,,6arfjYBXdEa5l4hE/fJzUA,puuO8vGhRUyOmMA5nP1O+g,,,N,0,0,,,2012-06-19 11:46,2012-06-20 09:59,admin,admin
235,144243,5115,22814,6085,1,0,N,N,N,CP_Drtn,TT_LOE,DT_FixedDUR2,RV_OK,TK_NotStart,A1180,T.E.R  for Radar System,,2176,0,184,0,0,0,184,0,0,0,,,,2012-07-03 08:00,2013-09-02 16:00,,2012-07-03 08:00,2012-08-02 16:00,2012-07-03 08:00,2012-08-02 16:00,2012-07-03 08:00,2012-08-02 16:00,,2012-07-03 08:00,2013-09-02 16:00,,PT_Normal,,,,,2NlcLXH0IkSpDoOIoJHGnQ,wSpvN7TbW0C3y0sKPLokBw,,,N,0,0,,,2012-06-19 11:46,2012-06-20 10:09,admin,admin
236,144244,5115,22814,6085,1,0,N,N,N,CP_Drtn,TT_LOE,DT_FixedDUR2,RV_OK,TK_NotStart,A1530,MRP for Radar System,,1392,0,40,0,0,0,40,0,0,0,,,,2013-05-14 08:00,2013-05-20 16:00,,2012-09-05 08:00,2012-09-11 16:00,2012-09-05 08:00,2012-09-11 16:00,2012-09-05 08:00,2012-09-11 16:00,,2013-05-14 08:00,2013-05-20 16:00,,PT_Normal,,,,,QVdaVu4YU0Gl7cbPFsmFdg,budr3CG4i0GaHCpjUSXmxg,,,N,0,0,,,2012-06-19 11:46,2012-06-20 10:09,admin,admin
237,144245,5115,22814,6087,1,0,N,N,N,CP_Drtn,TT_Task,DT_FixedDUR2,RV_OK,TK_NotStart,4229PRS100,Delivery upto site,,2024,0,240,0,0,0,240,0,0,0,,,,2013-08-28 08:00,2013-09-26 16:00,,2012-12-20 08:00,2013-01-16 16:00,2012-12-20 08:00,2013-01-16 16:00,2012-12-20 08:00,2013-01-16 16:00,,2013-08-28 08:00,2013-09-26 16:00,,PT_Normal,,,,,kUl2maTqwkqI5J0VnPQHVg,g8Q0jtgbT/+uddB0tjRcbQ,,,N,0,0,,,2012-06-19 11:46,2012-06-20 09:59,admin,admin
238,144246,5115,22814,6085,1,0,N,N,N,CP_Drtn,TT_Task,DT_FixedDUR2,RV_OK,TK_NotStart,4229PRS30,Receive revised commercial offers,,1392,0,24,0,0,0,24,0,0,0,,,,2013-04-18 08:00,2013-04-22 16:00,,2012-08-05 08:00,2012-08-07 16:00,2012-08-05 08:00,2012-08-07 16:00,2012-08-05 08:00,2012-08-07 16:00,,2013-04-18 08:00,2013-04-22 16:00,,PT_Normal,,,,,thBEk8nRGkyDU8al02jedw,B+Zuduv2SsyLxT8xwR8UPQ,,,N,0,0,,,2012-06-19 11:46,2012-06-20 09:59,admin,admin
239,144247,5115,22814,6085,1,0,N,N,N,CP_Drtn,TT_Task,DT_FixedDUR2,RV_OK,TK_NotStart,4229PRS50,Client approval on bid committee reccomendation,,1392,0,16,0,0,0,16,0,0,0,,,,2013-05-07 08:00,2013-05-08 16:00,,2012-08-29 08:00,2012-08-30 16:00,2012-08-29 08:00,2012-08-30 16:00,2012-08-29 08:00,2012-08-30 16:00,,2013-05-07 08:00,2013-05-08 16:00,,PT_Normal,,,,,ZylEuUQEXE+etL2r7Zmn9w,zT/22/TBQsCQFBhN3YnEyg,,,N,0,0,,,2012-06-19 11:46,2012-06-20 09:59,admin,admin
240,144248,5115,22814,6085,1,0,N,N,N,CP_Drtn,TT_Task,DT_FixedDUR2,RV_OK,TK_NotStart,4229PRS80,L.C issued by Gupco,,1392,0,40,0,0,0,40,0,0,0,,,,2013-05-23 08:00,2013-05-29 16:00,,2012-09-16 08:00,2012-09-20 16:00,2012-09-16 08:00,2012-09-20 16:00,2012-09-16 08:00,2012-09-20 16:00,,2013-05-23 08:00,2013-05-29 16:00,,PT_Normal,,,,,qz/yjmc0Xk+LAdqQb8OmkA,cOseZnNCQ9uilVGDGxsV7A,,,N,0,0,,,2012-06-19 11:46,2012-06-20 09:59,admin,admin
241,144249,5115,22814,6085,1,100,N,N,N,CP_Drtn,TT_Task,DT_FixedDUR2,RV_OK,TK_Complete,4229PRS10,Issue RFQ for Radar system,,,,0,0,0,0,16,0,0,0,,2011-11-30 00:00,2011-11-30 00:00,2012-06-04 08:00,2012-06-04 08:00,,2012-06-02 00:00,2012-06-02 00:00,,,2011-12-04 08:00,2011-12-05 16:00,,,,,PT_Normal,,,,,+lsQ69H6xUKmW0ihW2k4NQ,yASt0/SqSpucA1CBFijq/Q,,,N,0,0,,,2012-06-19 11:46,2012-06-20 10:09,admin,admin
242,144250,5115,22814,6086,1,0,N,N,N,CP_Drtn,TT_Task,DT_FixedDUR2,RV_OK,TK_Active,4229PRS20,Bidding for Radar system,,16,0,232,0,0,0,120,0,0,0,,2011-12-01 00:00,,2012-06-04 08:00,2012-07-02 16:00,2012-06-30 16:00,2012-06-02 08:00,2012-06-30 16:00,2012-06-02 08:00,2012-06-30 16:00,2011-12-06 08:00,2011-12-20 16:00,,2012-06-04 08:00,2012-07-02 16:00,,PT_Normal,,,,,K4FlbzrToU6PMf0ytQvAhg,rv6U+xZER1a1xRmaRFaz6Q,,,N,0,0,,,2012-06-19 11:46,2012-06-19 11:46,admin,admin
243,144251,5115,22815,6086,1,0,N,N,N,CP_Drtn,TT_Task,DT_FixedDUR2,RV_OK,TK_Active,4229PMP90,Fabrication upto R.F.S,,1600,0,1056,0,0,0,1888,0,0,0,,2012-02-22 00:00,,2012-12-31 08:00,2013-05-11 16:00,2012-10-23 16:00,2012-06-02 08:00,2012-10-23 16:00,2012-06-02 08:00,2012-10-23 16:00,2012-03-09 08:00,2012-11-11 16:00,,2012-12-31 08:00,2013-05-11 16:00,,PT_Normal,,,,,PyYVAFtLdUurOiTmRLnKmg,7UQ9XmTabEqxyA7/76n9MA,,,N,0,0,,,2012-06-19 11:46,2012-06-20 09:59,admin,admin
244,144252,5115,22815,6086,1,0,N,N,N,CP_Drtn,TT_Task,DT_FixedDUR2,RV_OK,TK_NotStart,4229PMP100,Delivery upto site,,2464,440,240,0,0,0,240,0,0,0,,,,2013-08-28 08:00,2013-09-26 16:00,,2012-10-24 08:00,2012-11-22 16:00,2012-10-24 08:00,2012-11-22 16:00,2012-10-24 08:00,2012-11-22 16:00,,2013-08-28 08:00,2013-09-26 16:00,,PT_Normal,,,,,TyplgjrlQE60+nhe2Rkr6w,Ed1rw6pVGkqfXjRfFT7JpQ,,,N,0,0,,,2012-06-19 11:46,2012-06-20 09:59,admin,admin
245,144253,5115,22815,6085,1,100,N,N,N,CP_Drtn,TT_Task,DT_FixedDUR2,RV_OK,TK_Complete,4229PMP30,Receive revised commercial offers,,,,0,0,0,0,32,0,0,0,,2011-12-22 08:00,2011-12-25 00:00,2012-12-31 08:00,2012-12-31 08:00,,2012-06-02 00:00,2012-06-02 00:00,,,2011-12-22 08:00,2011-12-27 16:00,,,,,PT_Normal,,,,,gG57eM/ZREKR4WtWIj27HQ,rsbY6IPE9Ey3ZU3ZNeLLVg,,,N,0,0,,,2012-06-19 11:46,2012-06-20 10:09,admin,admin
246,144254,5115,22815,6085,1,100,N,N,N,CP_Drtn,TT_Task,DT_FixedDUR2,RV_OK,TK_Complete,4229PMP50,Client approval on bid committee reccomendation,,,,0,0,0,0,16,0,0,0,,2011-12-29 00:00,2012-01-31 16:00,2012-12-31 08:00,2012-12-31 08:00,,2012-06-02 00:00,2012-06-02 00:00,,,2012-01-29 08:00,2012-01-30 16:00,,,,,PT_Normal,,,,,VH/7S/xbVEOMCAeeFbOU0g,iKP7vyvUVkGYjFWGXsYtWw,,,N,0,0,,,2012-06-19 11:46,2012-06-20 10:09,admin,admin
247,144255,5115,22815,6085,1,0,N,N,N,CP_Drtn,TT_Task,DT_FixedDUR2,RV_OK,TK_NotStart,4229PMP80,L.C issued by Gupco,,2640,2640,40,0,0,0,40,0,0,0,,,,2013-09-22 08:00,2013-09-26 16:00,,2012-06-03 08:00,2012-06-07 16:00,2012-06-03 08:00,2012-06-07 16:00,2012-06-03 08:00,2012-06-07 16:00,,2013-09-22 08:00,2013-09-26 16:00,,PT_Normal,,,,,SYBwWqgWEEiZXKbe12c4vw,/xqtBKQ3QEuTmEP+B+vEag,,,N,0,0,,,2012-06-19 11:46,2012-06-20 09:59,admin,admin
248,144256,5115,22815,6085,1,100,N,N,N,CP_Drtn,TT_Task,DT_FixedDUR2,RV_OK,TK_Complete,4229PMP10,Issue RFQ for MPFM,,,,0,0,0,0,16,0,0,0,,2011-10-09 00:00,2011-10-09 00:00,2012-12-31 08:00,2012-12-31 08:00,,2012-06-02 00:00,2012-06-02 00:00,,,2011-08-15 08:00,2011-08-16 16:00,,,,,PT_Normal,,,,,ttIPMMmFyEOlK6O47M3hiA,PapX/E/5VEedYgMn9pW1WA,,,N,0,0,,,2012-06-19 11:46,2012-06-20 10:09,admin,admin
249,144257,5115,22815,6086,1,100,N,N,N,CP_Drtn,TT_Task,DT_FixedDUR2,RV_OK,TK_Complete,4229PMP20,Bidding for MPFM,,,,0,0,0,0,240,0,0,0,,2011-10-10 00:00,2011-11-13 00:00,2012-12-31 08:00,2012-12-31 08:00,,2012-06-02 00:00,2012-06-02 00:00,,,2011-08-17 08:00,2011-09-15 16:00,,,,,PT_Normal,,,,,EMsJ0vXy7EaZCgH3o9+g4A,WAPraHdgpEiuGrgnPTRw+A,,,N,0,0,,,2012-06-19 11:46,2012-06-20 10:09,admin,admin
250,144258,5115,22815,6085,1,100,N,N,N,CP_Drtn,TT_Task,DT_FixedDUR2,RV_OK,TK_Complete,4229PMP60,F.O.C for MPFM,,,,0,0,0,0,24,0,0,0,,2012-02-01 00:00,2012-02-08 16:00,2012-12-31 08:00,2012-12-31 08:00,,2012-06-02 00:00,2012-06-02 00:00,,,2012-01-31 08:00,2012-02-02 16:00,,,,,PT_Normal,,,,,XoU5+slHSEGQ/0hKqv5IlQ,4AXOah8HAEeGpjijEBPUrg,,,N,0,0,,,2012-06-19 11:46,2012-06-20 10:09,admin,admin
251,144259,5115,22815,6085,1,100,N,N,N,CP_Drtn,TT_Task,DT_FixedDUR2,RV_OK,TK_Complete,4229PMP70,P.O for MPFM,,,,0,0,0,0,16,0,0,0,,2012-02-20 00:00,2012-02-21 00:00,2012-12-31 08:00,2012-12-31 08:00,,2012-06-02 00:00,2012-06-02 00:00,,,2012-03-04 08:00,2012-03-05 16:00,,,,,PT_Normal,,,,,F4AfQ7F5Z0aOW2BlOSkBlQ,AvajsHLxjEGyyQn6kYuXCQ,,,N,0,0,,,2012-06-19 11:46,2012-06-20 10:09,admin,admin
252,144260,5115,22815,6085,1,100,N,N,N,CP_Drtn,TT_Task,DT_FixedDUR2,RV_OK,TK_Complete,4229PMP40,commercial evaluation & bid committee for MPFM,,,,0,0,0,0,80,0,0,0,,2011-12-27 00:00,2011-12-28 00:00,2012-12-31 08:00,2012-12-31 08:00,,2012-06-02 00:00,2012-06-02 00:00,,,2012-01-01 08:00,2012-01-12 16:00,,,,,PT_Normal,,,,,+2ORqS83AUKlGjIg0WJ/CQ,e/V43NRVMUS133iTAw1J2Q,,,N,0,0,,,2012-06-19 11:46,2012-06-20 10:09,admin,admin
253,144261,5115,22815,6085,1,100,N,N,N,CP_Drtn,TT_LOE,DT_FixedDUR2,RV_OK,TK_Complete,A1240,T.E.R for MPFM,,,,0,0,0,0,160,0,0,0,,2011-11-14 00:00,2011-12-21 00:00,,,,,,,,2011-12-04 08:00,2011-12-29 16:00,,,,,PT_Normal,,,,,vHxFTRx+4U2jNnmiZuRJag,WzgvWtSfhU2NzXehbY6bPQ,,,N,0,0,,,2012-06-19 11:46,2012-06-19 11:46,admin,admin
254,144262,5115,22815,6085,1,100,N,N,N,CP_Drtn,TT_LOE,DT_FixedDrtn,RV_OK,TK_Complete,A1460,MRP for MPFM,,,,0,0,0,0,40,0,0,0,,2012-02-09 00:00,2012-02-20 00:00,,,,,,,,2012-03-04 08:00,2012-03-08 16:00,,,,,PT_Normal,,,,,VrO5BJqR5Ei5RtughUrpTA,T+0ciQgipEq2+vMtZIK5pQ,,,N,0,0,,,2012-06-19 11:46,2012-06-19 11:46,admin,admin
255,144263,5115,22797,6085,1,100,N,N,N,CP_Drtn,TT_Task,DT_FixedDUR2,RV_OK,TK_Complete,4229PSV30,Receive revised commercial offers,,,,0,0,0,0,40,0,0,0,,2012-02-01 08:00,2012-02-27 00:00,2012-12-24 08:00,2012-12-24 08:00,,2012-06-02 00:00,2012-06-02 00:00,,,2012-02-01 08:00,2012-02-07 16:00,,,,,PT_Normal,,,,,HpVryvNwpE6l9oO2wBFVpw,AYPNiDXaKE6RLh7mqlxUcQ,,,N,0,0,,,2012-06-19 11:46,2012-06-20 10:09,admin,admin
256,144264,5115,22797,6085,1,100,N,N,N,CP_Drtn,TT_Task,DT_FixedDUR2,RV_OK,TK_Complete,4229PSV50,Client approval on bid committee reccomendation,,,,0,0,0,0,16,0,0,0,,2012-03-07 00:00,2012-04-02 00:00,2012-12-24 08:00,2012-12-24 08:00,,2012-06-02 00:00,2012-06-02 00:00,,,2012-04-01 08:00,2012-04-02 16:00,,,,,PT_Normal,,,,,oXPuHrae702TaV+sJNDL2w,okMlSxQPlUu8ymqN/KtiYQ,,,N,0,0,,,2012-06-19 11:46,2012-06-20 10:09,admin,admin
257,144265,5115,22797,6085,1,0,N,N,N,CP_Drtn,TT_Task,DT_FixedDUR2,RV_OK,TK_NotStart,4229PSV80,L.C issued by Gupco,,1088,0,40,0,0,0,40,0,0,0,,,,2012-12-24 08:00,2012-12-30 16:00,,2012-06-03 08:00,2012-06-07 16:00,2012-06-03 08:00,2012-06-07 16:00,2012-06-03 08:00,2012-06-07 16:00,,2012-12-24 08:00,2012-12-30 16:00,,PT_Normal,,,,,Mzets2WQPkmbcIVHXEh10A,8XeEO//CcEKYVr5WUWm1nw,,,N,0,0,,,2012-06-19 11:46,2012-06-20 09:59,admin,admin
258,144266,5115,22797,6086,1,0,N,N,N,CP_Drtn,TT_Task,DT_FixedDUR2,RV_OK,TK_Active,4229PSV90,Fabrication upto R.F.S,,1552,0,672,0,0,0,1176,0,0,0,,2012-04-11 00:00,,2012-12-31 08:00,2013-03-24 16:00,2012-09-11 16:00,2012-06-08 08:00,2012-09-11 16:00,2012-06-08 08:00,2012-09-11 16:00,2012-04-06 08:00,2012-09-11 16:00,,2012-12-31 08:00,2013-03-24 16:00,,PT_Normal,,,,,pYdeed6RR0iV7cSJ3V0Z6w,erBLKNm/ZUeEO9HJpLgTjg,,,N,0,0,,,2012-06-19 11:46,2012-06-20 09:59,admin,admin
259,144267,5115,22797,6087,1,0,N,N,N,CP_Drtn,TT_Task,DT_FixedDUR2,RV_OK,TK_NotStart,4229PSV100,Delivery upto site,,2944,920,112,0,0,0,112,0,0,0,,,,2013-09-13 08:00,2013-09-26 16:00,,2012-09-12 08:00,2012-09-25 16:00,2012-09-12 08:00,2012-09-25 16:00,2012-09-12 08:00,2012-09-25 16:00,,2013-09-13 08:00,2013-09-26 16:00,,PT_Normal,,,,,+535YEPMY0axvI6Cp2K9AQ,PvZx3hz21kCQaaYCBE4F/Q,,,N,0,0,,,2012-06-19 11:46,2012-06-20 09:59,admin,admin
260,144268,5115,22797,6085,1,100,N,N,N,CP_Drtn,TT_Task,DT_FixedDUR2,RV_OK,TK_Complete,4229PSV10,Issue RFQ for PSV,,,,0,0,0,0,16,0,0,0,,2011-10-19 00:00,2011-10-20 00:00,2012-12-24 08:00,2012-12-24 08:00,,2012-06-02 00:00,2012-06-02 00:00,,,2011-10-16 08:00,2011-10-17 16:00,,,,,PT_Normal,,,,,J1CMNr/n40uYuCsX8MkiZA,iEmal3hge0uAij6Wk9qVTQ,,,N,0,0,,,2012-06-19 11:46,2012-06-20 10:09,admin,admin
261,144269,5115,22797,6086,1,100,N,N,N,CP_Drtn,TT_Task,DT_FixedDUR2,RV_OK,TK_Complete,4229PSV20,Bidding for PSV,,,,0,0,0,0,240,0,0,0,,2011-10-21 00:00,2011-11-16 00:00,2012-12-24 08:00,2012-12-24 08:00,,2012-06-02 00:00,2012-06-02 00:00,,,2011-10-18 08:00,2011-11-16 16:00,,,,,PT_Normal,,,,,XBbaaOTTFk2W1Y5fSivGoA,x88PzjMZV0GiGu49qJdzgw,,,N,0,0,,,2012-06-19 11:46,2012-06-20 10:09,admin,admin
262,144270,5115,22797,6085,1,100,N,N,N,CP_Drtn,TT_Task,DT_FixedDUR2,RV_OK,TK_Complete,4229PSV40,commercial evaluation & bid committee for PSV,,,,0,0,0,0,80,0,0,0,,2012-02-28 00:00,2012-03-06 00:00,2012-12-24 08:00,2012-12-24 08:00,,2012-06-02 00:00,2012-06-02 00:00,,,2012-03-04 08:00,2012-03-15 16:00,,,,,PT_Normal,,,,,sUzGosCdYE+a8/15Nw/f9Q,ZFrWAGC2TE+1R7WsidTdYQ,,,N,0,0,,,2012-06-19 11:46,2012-06-20 10:09,admin,admin
263,144271,5115,22797,6085,1,100,N,N,N,CP_Drtn,TT_Task,DT_FixedDUR2,RV_OK,TK_Complete,4229PSV60,F.O.C for PSV,,,,0,0,0,0,24,0,0,0,,2012-04-02 00:00,2012-04-03 00:00,2012-12-24 08:00,2012-12-24 08:00,,2012-06-02 00:00,2012-06-02 00:00,,,2012-04-03 08:00,2012-04-05 16:00,,,,,PT_Normal,,,,,yqbHVE7GOECJn0Ln9Ri7qA,plWp9w3MSEaEBD3XTKD6uw,,,N,0,0,,,2012-06-19 11:46,2012-06-20 10:09,admin,admin
264,144272,5115,22797,6085,1,100,N,N,N,CP_Drtn,TT_Task,DT_FixedDUR2,RV_OK,TK_Complete,4229PSV70,P.O for PSV,,,,0,0,0,0,40,0,0,0,,2012-04-10 08:00,2012-04-11 00:00,2012-12-24 08:00,2012-12-24 08:00,,2012-06-02 00:00,2012-06-02 00:00,,,2012-04-10 08:00,2012-04-16 16:00,,,,,PT_Normal,,,,,EORbAbisqU+JI1hrF/droA,XKuDtF9Y5kyIjE3UFTFzuw,,,N,0,0,,,2012-06-19 11:46,2012-06-20 10:09,admin,admin
265,144273,5115,22797,6085,1,100,N,N,N,CP_Drtn,TT_LOE,DT_FixedDUR2,RV_OK,TK_Complete,A1040,T.E.R for PSV,,,,0,0,0,0,223,0,0,0,,2011-11-17 00:00,2012-01-31 00:00,,,,,,,,2011-11-16 08:00,2011-12-25 15:00,,,,,PT_Normal,,,,,nvqB6ByaqUWqnIZo3p8B4w,b2YYy9o+s0qLd1hArx2WDQ,,,N,0,0,,,2012-06-19 11:46,2012-06-19 11:46,admin,admin
266,144274,5115,22797,6085,1,100,N,N,N,CP_Drtn,TT_LOE,DT_FixedDUR2,RV_OK,TK_Complete,A1320,MRP for PSV,,,,0,0,0,0,16,0,0,0,,2012-04-05 08:00,2012-04-09 16:00,,,,,,,,2012-04-05 08:00,2012-04-08 16:00,,,,,PT_Normal,,,,,gOisBpudnEir3lypde2aiQ,ZXfVgzf22ESh29QZTh9ssg,,,N,0,0,,,2012-06-19 11:46,2012-06-19 11:46,admin,admin
267,144275,5115,22798,6086,1,0,N,N,N,CP_Drtn,TT_Task,DT_FixedDUR2,RV_OK,TK_Active,4229POV90,Fabrication upto R.F.S,,1720,0,1200,0,0,0,1448,0,0,0,,2012-04-30 00:00,,2013-01-21 08:00,2013-06-19 16:00,2012-11-16 16:00,2012-06-08 08:00,2012-11-16 16:00,2012-06-08 08:00,2012-11-16 16:00,2012-05-08 08:00,2012-11-16 16:00,,2013-01-21 08:00,2013-06-19 16:00,,PT_Normal,,,,,6hFZN7fyb0meJGe3Ez3bbw,7UQ9XmTabEqxyA7/76n9MA,,,N,0,0,,,2012-06-19 11:46,2012-06-20 09:59,admin,admin
268,144276,5115,22798,6086,1,0,N,N,N,CP_Drtn,TT_Task,DT_FixedDUR2,RV_OK,TK_NotStart,4229POV100,Delivery upto site,,2272,248,240,0,0,0,240,0,0,0,,,,2013-08-28 08:00,2013-09-26 16:00,,2012-11-17 08:00,2012-12-16 16:00,2012-11-17 08:00,2012-12-16 16:00,2012-11-17 08:00,2012-12-16 16:00,,2013-08-28 08:00,2013-09-26 16:00,,PT_Normal,,,,,AYWLbivAQ0mel0ZT5OQ/qA,Ed1rw6pVGkqfXjRfFT7JpQ,,,N,0,0,,,2012-06-19 11:46,2012-06-20 09:59,admin,admin
269,144277,5115,22798,6085,1,100,N,N,N,CP_Drtn,TT_Task,DT_FixedDUR2,RV_OK,TK_Complete,4229POV30,Receive revised commercial offers,,,,0,0,0,0,40,0,0,0,,2012-02-02 00:00,2012-02-16 00:00,2013-09-26 16:00,2013-09-26 16:00,,2012-06-02 00:00,2012-06-02 00:00,,,2012-03-08 08:00,2012-03-14 16:00,,,,,PT_Normal,,,,,U7V5mkOHdECLl/a8Gd+BWQ,AYPNiDXaKE6RLh7mqlxUcQ,,,N,0,0,,,2012-06-19 11:46,2012-06-20 10:09,admin,admin
270,144278,5115,22798,6085,1,100,N,N,N,CP_Drtn,TT_Task,DT_FixedDUR2,RV_OK,TK_Complete,4229POV50,Client approval on bid committee reccommendation,,,,0,0,0,0,16,0,0,0,,2012-03-05 00:00,2012-03-28 00:00,2013-01-14 08:00,2013-01-14 08:00,,2012-06-02 00:00,2012-06-02 00:00,,,2012-04-03 08:00,2012-04-04 16:00,,,,,PT_Normal,,,,,scSJtBaPBU6YPjKvl6La5g,okMlSxQPlUu8ymqN/KtiYQ,,,N,0,0,,,2012-06-19 11:46,2012-06-20 10:09,admin,admin
271,144279,5115,22798,6085,1,0,N,N,N,CP_Drtn,TT_Task,DT_FixedDUR2,RV_OK,TK_NotStart,4229POV80,L.C issued by Gupco,,1208,0,40,0,0,0,40,0,0,0,,,,2013-01-14 08:00,2013-01-20 16:00,,2012-06-03 08:00,2012-06-07 16:00,2012-06-03 08:00,2012-06-07 16:00,2012-06-03 08:00,2012-06-07 16:00,,2013-01-14 08:00,2013-01-20 16:00,,PT_Normal,,,,,foBWl3wc+US6I8KpWikrIA,8XeEO//CcEKYVr5WUWm1nw,,,N,0,0,,,2012-06-19 11:46,2012-06-20 09:59,admin,admin
272,144280,5115,22798,6085,1,100,N,N,N,CP_Drtn,TT_Task,DT_FixedDUR2,RV_OK,TK_Complete,4229POV10,Issue RFQ for SDV,,,,0,0,0,0,16,0,0,0,,2011-10-27 00:00,2011-10-27 00:00,2013-09-26 16:00,2013-09-26 16:00,,2012-06-02 00:00,2012-06-02 00:00,,,2011-10-20 08:00,2011-10-23 16:00,,,,,PT_Normal,,,,,heIwaE+bPU6dbEW8hEFWWg,iEmal3hge0uAij6Wk9qVTQ,,,N,0,0,,,2012-06-19 11:46,2012-06-20 10:09,admin,admin
273,144281,5115,22798,6086,1,100,N,N,N,CP_Drtn,TT_Task,DT_FixedDUR2,RV_OK,TK_Complete,4229POV20,Bidding for SDV,,,,0,0,0,0,240,0,0,0,,2011-10-28 00:00,2011-11-27 00:00,2013-09-26 16:00,2013-09-26 16:00,,2012-06-02 00:00,2012-06-02 00:00,,,2011-11-01 08:00,2011-11-30 16:00,,,,,PT_Normal,,,,,D0qZob++sEeOLSoc3fKpMw,x88PzjMZV0GiGu49qJdzgw,,,N,0,0,,,2012-06-19 11:46,2012-06-20 10:09,admin,admin
274,144282,5115,22798,6085,1,100,N,N,N,CP_Drtn,TT_Task,DT_FixedDUR2,RV_OK,TK_Complete,4229POV40,Commercial evaluation & bid committee for SDV,,,,0,0,0,0,80,0,0,0,,2012-02-16 00:00,2012-02-19 00:00,2013-01-14 08:00,2013-01-14 08:00,,2012-06-02 00:00,2012-06-02 00:00,,,2012-03-15 08:00,2012-03-28 16:00,,,,,PT_Normal,,,,,F/tqfCct7k6I/jsuOYMcxw,ZFrWAGC2TE+1R7WsidTdYQ,,,N,0,0,,,2012-06-19 11:46,2012-06-20 10:09,admin,admin
275,144283,5115,22798,6085,1,100,N,N,N,CP_Drtn,TT_Task,DT_FixedDUR2,RV_OK,TK_Complete,4229POV60,F.O.C for SDV,,,,0,0,0,0,16,0,0,0,,2012-03-29 00:00,2012-04-22 00:00,2013-01-14 08:00,2013-01-14 08:00,,2012-06-02 00:00,2012-06-02 00:00,,,2012-04-01 08:00,2012-04-02 16:00,,,,,PT_Normal,,,,,4ahnZRAz202o65zAXqv8tA,plWp9w3MSEaEBD3XTKD6uw,,,N,0,0,,,2012-06-19 11:46,2012-06-20 10:09,admin,admin
276,144284,5115,22798,6085,1,100,N,N,N,CP_Drtn,TT_Task,DT_FixedDUR2,RV_OK,TK_Complete,4229POV70,P.O for SDV,,,,0,0,0,0,16,0,0,0,,2012-04-29 00:00,2012-04-29 00:00,2013-01-14 08:00,2013-01-14 08:00,,2012-06-02 00:00,2012-06-02 00:00,,,2012-04-29 08:00,2012-04-30 16:00,,,,,PT_Normal,,,,,0kgdRaEALUWuEWPvc6srQQ,XKuDtF9Y5kyIjE3UFTFzuw,,,N,0,0,,,2012-06-19 11:46,2012-06-20 10:09,admin,admin
277,144285,5115,22798,6085,1,100,N,N,N,CP_Drtn,TT_LOE,DT_FixedDUR2,RV_OK,TK_Complete,A1270,T.E.R for SDV,,,,0,0,0,0,160,0,0,0,,2011-11-28 00:00,2012-02-01 16:00,,,,,,,,2011-12-04 08:00,2011-12-29 16:00,,,,,PT_Normal,,,,,RX/K54UUdE6IiPQyCmmgsQ,oLwPrR8dtkKCqtyNJtHEow,,,N,0,0,,,2012-06-19 11:46,2012-06-19 11:46,admin,admin
278,144286,5115,22798,6085,1,100,N,N,N,CP_Drtn,TT_LOE,DT_FixedDUR2,RV_OK,TK_Complete,A1490,MRP for SDV,,,,0,0,0,0,40,0,0,0,,2012-04-22 00:00,2012-04-26 00:00,,,,,,,,2012-04-29 08:00,2012-05-03 16:00,,,,,PT_Normal,,,,,UqjzVvMvz068zYmaSbKZFw,TrMWPgitaUmZGiDj84RmyQ,,,N,0,0,,,2012-06-19 11:46,2012-06-19 11:46,admin,admin
279,144287,5115,22799,6086,1,100,N,N,N,CP_Drtn,TT_Task,DT_FixedDUR2,RV_OK,TK_Complete,4229PPB20,Bidding for Piping bulk,,,,0,0,0,0,112,0,0,0,,2011-11-25 00:00,2011-12-20 00:00,2013-06-13 08:00,2013-06-13 08:00,,2012-06-02 00:00,2012-06-02 00:00,,,2011-12-06 08:00,2011-12-19 16:00,,,,,PT_Normal,,,,,OwofujtS30WDZ72eUbkdaw,x88PzjMZV0GiGu49qJdzgw,,,N,0,0,,,2012-06-19 11:46,2012-06-20 10:09,admin,admin
280,144288,5115,22799,6085,1,100,N,N,N,CP_Drtn,TT_Task,DT_FixedDUR2,RV_OK,TK_Complete,4229PPB40,commercial evaluation & bid committee for Piping bulk,,,,0,0,0,0,96,0,0,0,,2012-02-08 00:00,2012-02-23 00:00,2013-06-13 08:00,2013-06-13 08:00,,2012-06-02 00:00,2012-06-02 00:00,,,2012-03-11 08:00,2012-03-26 16:00,,,,,PT_Normal,,,,,/OAhGOyXLUWpmKIBIirSrA,ZFrWAGC2TE+1R7WsidTdYQ,,,N,0,0,,,2012-06-19 11:46,2012-06-20 10:09,admin,admin
281,144289,5115,22799,6085,1,100,N,N,N,CP_Drtn,TT_Task,DT_FixedDUR2,RV_OK,TK_Complete,4229PPB60,F.O.C for Piping bulk,,,,0,0,0,0,24,0,0,0,,2012-03-01 00:00,2012-03-18 00:00,2013-06-13 08:00,2013-06-13 08:00,,2012-06-02 00:00,2012-06-02 00:00,,,2012-04-03 08:00,2012-04-05 16:00,,,,,PT_Normal,,,,,Wm5VbUSVDE2S1kQhJG3Y6w,plWp9w3MSEaEBD3XTKD6uw,,,N,0,0,,,2012-06-19 11:46,2012-06-20 10:09,admin,admin
282,144290,5115,22799,6085,1,100,N,N,N,CP_Drtn,TT_Task,DT_FixedDUR2,RV_OK,TK_Complete,4229PPB70,P.O for Piping bulk,,,,0,0,0,0,16,0,0,0,,2012-03-28 00:00,2012-03-29 00:00,2013-06-13 08:00,2013-06-13 08:00,,2012-06-02 00:00,2012-06-02 00:00,,,2012-04-01 08:00,2012-04-02 16:00,,,,,PT_Normal,,,,,bUZJbeK/uUGWLpKU7M4HEg,XKuDtF9Y5kyIjE3UFTFzuw,,,N,0,0,,,2012-06-19 11:46,2012-06-20 10:09,admin,admin
283,144291,5115,22799,6085,1,100,N,N,N,CP_Drtn,TT_LOE,DT_FixedDUR2,RV_OK,TK_Complete,A1100,T.E.R for Piping bulk,,,,0,0,0,0,120,0,0,0,,2011-12-22 00:00,2012-01-26 00:00,,,,,,,,2011-12-13 08:00,2012-01-02 16:00,,,,,PT_Normal,,,,,i+ye2XdtSk6GXsWj9IbUQw,ffGWAsroqUC7EdTJZrAS1A,,,N,0,0,,,2012-06-19 11:46,2012-06-19 11:46,admin,admin
284,144292,5115,22799,6085,1,100,N,N,N,CP_Drtn,TT_LOE,DT_FixedDUR2,RV_OK,TK_Complete,A1370,MRP for Piping bulk,,,,0,0,0,0,56,0,0,0,,2012-03-19 08:00,2012-03-27 16:00,,,,,,,,2012-03-19 08:00,2012-03-27 16:00,,,,,PT_Normal,,,,,Ufzcokic7EiRrsQAcWsZRg,v+2pKzAUI0aArXAlsWBTTg,,,N,0,0,,,2012-06-19 11:46,2012-06-19 11:46,admin,admin
285,144293,5115,22799,6085,1,100,N,N,N,CP_Drtn,TT_Task,DT_FixedDUR2,RV_OK,TK_Complete,4229PPB30,Receive revised commercial offers,,,,0,0,0,0,40,0,0,0,,2012-01-25 00:00,2012-02-07 00:00,2013-06-13 08:00,2013-06-13 08:00,,2012-06-02 00:00,2012-06-02 00:00,,,2012-01-26 08:00,2012-02-01 16:00,,,,,PT_Normal,,,,,3lTFTGD/NkenlAjgkN1/CA,AYPNiDXaKE6RLh7mqlxUcQ,,,N,0,0,,,2012-06-19 11:46,2012-06-20 10:09,admin,admin
286,144294,5115,22799,6085,1,100,N,N,N,CP_Drtn,TT_Task,DT_FixedDUR2,RV_OK,TK_Complete,4229PPB50,Client approval on bid committee reccomendation,,,,0,0,0,0,16,0,0,0,,2012-02-23 00:00,2012-02-29 00:00,2013-06-13 08:00,2013-06-13 08:00,,2012-06-02 00:00,2012-06-02 00:00,,,2012-03-04 08:00,2012-03-05 16:00,,,,,PT_Normal,,,,,18cuvQXsykqUFb4kjXnp6g,okMlSxQPlUu8ymqN/KtiYQ,,,N,0,0,,,2012-06-19 11:46,2012-06-20 10:09,admin,admin
287,144295,5115,22799,6086,1,0,N,N,N,CP_Drtn,TT_Task,DT_FixedDUR2,RV_OK,TK_NotStart,4229PPB110,Fabrication upto R.F.S for minimal piping balance,,1592,0,960,0,0,0,960,0,0,0,,,,2013-04-15 08:00,2013-08-12 16:00,,2012-09-28 08:00,2013-01-25 16:00,2012-09-28 08:00,2013-01-25 16:00,2012-09-28 08:00,2013-01-25 16:00,,2013-04-15 08:00,2013-08-12 16:00,,PT_Normal,,,,,0WI/C7Wt4kee0TNmmpiAHA,,,,N,0,0,,,2012-06-19 11:46,2012-06-20 09:59,admin,admin
288,144296,5115,22799,6087,1,0,N,N,N,CP_Drtn,TT_Task,DT_FixedDUR2,RV_OK,TK_NotStart,4229PPB120,Delivery upto site (2nd Batch) for minimal piping balance,,1592,0,360,0,0,0,360,0,0,0,,,,2013-08-13 08:00,2013-09-26 16:00,,2013-01-26 08:00,2013-03-11 16:00,2013-01-26 08:00,2013-03-11 16:00,2013-01-26 08:00,2013-03-11 16:00,,2013-08-13 08:00,2013-09-26 16:00,,PT_Normal,,,,,loaa14wlS0uJO4F6+TmoeQ,,,,N,0,0,,,2012-06-19 11:46,2012-06-20 09:59,admin,admin
289,144297,5115,22799,6085,1,0,N,N,N,CP_Drtn,TT_Task,DT_FixedDUR2,RV_OK,TK_NotStart,4229PPB80,L.C issued by Gupco,,2072,0,40,0,0,0,40,0,0,0,,,,2013-06-13 08:00,2013-06-19 16:00,,2012-06-03 08:00,2012-06-07 16:00,2012-06-03 08:00,2012-06-07 16:00,2012-06-03 08:00,2012-06-07 16:00,,2013-06-13 08:00,2013-06-19 16:00,,PT_Normal,,,,,OhfMh0kUYU+8tw1kOTMjbQ,8XeEO//CcEKYVr5WUWm1nw,,,N,0,0,,,2012-06-19 11:46,2012-06-20 09:59,admin,admin
290,144298,5115,22799,6087,1,0,N,N,N,CP_Drtn,TT_Task,DT_FixedDUR2,RV_OK,TK_NotStart,4229PPB100,Delivery upto site (1st Batch),,3032,1008,360,0,0,0,360,0,0,0,,,,2013-08-13 08:00,2013-09-26 16:00,,2012-08-01 08:00,2012-09-14 16:00,2012-08-01 08:00,2012-09-14 16:00,2012-08-01 08:00,2012-09-14 16:00,,2013-08-13 08:00,2013-09-26 16:00,,PT_Normal,,,,,efFjg0Fs702X/Dj/7GbG+g,,,,N,0,0,,,2012-06-19 11:46,2012-06-20 09:59,admin,admin
291,144299,5115,22799,6086,1,0,N,N,N,CP_Drtn,TT_Task,DT_FixedDUR2,RV_OK,TK_Active,4229PPB90,Fabrication upto R.F.S (1st Batch),,2920,0,432,0,0,0,784,0,0,0,,2012-04-01 00:00,,2013-06-20 08:00,2013-08-12 16:00,2012-07-31 16:00,2012-06-08 08:00,2012-07-31 16:00,2012-06-08 08:00,2012-07-31 16:00,2012-04-06 08:00,2012-07-12 16:00,,2013-06-20 08:00,2013-08-12 16:00,,PT_Normal,,,,,u9uImagpZ06JWIJNUvZaKw,,,,N,0,0,,,2012-06-19 11:46,2012-06-20 09:59,admin,admin
292,144300,5115,22799,6085,1,100,N,N,N,CP_Drtn,TT_Task,DT_FixedDUR2,RV_OK,TK_Complete,4229PPB10,Issue RFQ for Piping bulk,,,,0,0,0,0,16,0,0,0,,2011-11-24 00:00,2011-11-24 00:00,2013-06-13 08:00,2013-06-13 08:00,,2012-06-02 00:00,2012-06-02 00:00,,,2011-12-04 08:00,2011-12-05 16:00,,,,,PT_Normal,,,,,R3njBbr8SUKAt6F/gB6FZw,iEmal3hge0uAij6Wk9qVTQ,,,N,0,0,,,2012-06-19 11:46,2012-06-20 10:09,admin,admin
293,144301,5115,22800,6086,1,100,N,N,N,CP_Drtn,TT_Task,DT_FixedDUR2,RV_OK,TK_Complete,4229PPV20,Bidding for Piping valves,,,,0,0,0,0,112,0,0,0,,2011-12-09 00:00,2012-01-03 00:00,2013-01-14 08:00,2013-01-14 08:00,,2012-06-02 00:00,2012-06-02 00:00,,,2012-01-08 08:00,2012-01-21 16:00,,,,,PT_Normal,,,,,//AGJGUi3EmhdQnbUHNxpA,WAPraHdgpEiuGrgnPTRw+A,,,N,0,0,,,2012-06-19 11:46,2012-06-20 10:09,admin,admin
294,144302,5115,22800,6085,1,100,N,N,N,CP_Drtn,TT_Task,DT_FixedDUR2,RV_OK,TK_Complete,4229PPV40,commercial evaluation & bid committee for Piping valves,,,,0,0,0,0,80,0,0,0,,2012-02-23 00:00,2012-03-14 00:00,2013-01-14 08:00,2013-01-14 08:00,,2012-06-02 00:00,2012-06-02 00:00,,,2012-03-11 08:00,2012-03-22 16:00,,,,,PT_Normal,,,,,ISmnqiUjSEyUsAoC3mfwJQ,e/V43NRVMUS133iTAw1J2Q,,,N,0,0,,,2012-06-19 11:46,2012-06-20 10:09,admin,admin
295,144303,5115,22800,6085,1,100,N,N,N,CP_Drtn,TT_Task,DT_FixedDUR2,RV_OK,TK_Complete,4229PPV60,F.O.C for Piping valves,,,,0,0,0,0,24,0,0,0,,2012-04-05 00:00,2012-04-05 00:00,2013-01-14 08:00,2013-01-14 08:00,,2012-06-02 00:00,2012-06-02 00:00,,,2012-04-09 08:00,2012-04-11 16:00,,,,,PT_Normal,,,,,w+MBFH220kym8+oxAco2Lg,4AXOah8HAEeGpjijEBPUrg,,,N,0,0,,,2012-06-19 11:46,2012-06-20 10:09,admin,admin
296,144304,5115,22800,6085,1,100,N,N,N,CP_Drtn,TT_Task,DT_FixedDUR2,RV_OK,TK_Complete,4229PPV70,P.O for Piping valves,,,,0,0,0,0,16,0,0,0,,2012-04-12 08:00,2012-04-17 00:00,2013-01-14 08:00,2013-01-14 08:00,,2012-06-02 00:00,2012-06-02 00:00,,,2012-04-12 08:00,2012-04-15 16:00,,,,,PT_Normal,,,,,HlU3B3+9VkWB7A2q1AMxaA,AvajsHLxjEGyyQn6kYuXCQ,,,N,0,0,,,2012-06-19 11:46,2012-06-20 10:09,admin,admin
297,144305,5115,22800,6086,1,0,N,N,N,CP_Drtn,TT_Task,DT_FixedDUR2,RV_OK,TK_Active,4229PPV90,Fabrication upto R.F.S (1st Batch),,1720,0,584,0,0,0,1088,0,0,0,,2012-04-17 00:00,,2013-01-21 08:00,2013-04-03 16:00,2012-08-19 16:00,2012-06-08 08:00,2012-08-19 16:00,2012-06-08 08:00,2012-08-19 16:00,2012-04-06 08:00,2012-08-19 16:00,,2013-01-21 08:00,2013-04-03 16:00,,PT_Normal,,,,,gE88VgnyWkiHtxyZNf+iKw,7UQ9XmTabEqxyA7/76n9MA,,,N,0,0,,,2012-06-19 11:46,2012-06-20 09:59,admin,admin
298,144306,5115,22800,6087,1,0,N,N,N,CP_Drtn,TT_Task,DT_FixedDUR2,RV_OK,TK_NotStart,4229PPV110,Delivery upto site (1st Batch),,3128,1536,112,0,0,0,112,0,0,0,,,,2013-09-13 08:00,2013-09-26 16:00,,2012-08-20 08:00,2012-09-02 16:00,2012-08-20 08:00,2012-09-02 16:00,2012-08-20 08:00,2012-09-02 16:00,,2013-09-13 08:00,2013-09-26 16:00,,PT_Normal,,,,,t4F/LVuynUawEZeSXaSG2w,Ed1rw6pVGkqfXjRfFT7JpQ,,,N,0,0,,,2012-06-19 11:46,2012-06-20 09:59,admin,admin
299,144307,5115,22800,6086,1,0,N,N,N,CP_Drtn,TT_Task,DT_FixedDUR2,RV_OK,TK_NotStart,4229PPV100,Fabrication upto R.F.S (2nd Batch) for minimal  balance,,1592,0,960,0,0,0,960,0,0,0,,,,2013-04-15 08:00,2013-08-12 16:00,,2012-09-28 08:00,2013-01-25 16:00,2012-09-28 08:00,2013-01-25 16:00,2012-09-28 08:00,2013-01-25 16:00,,2013-04-15 08:00,2013-08-12 16:00,,PT_Normal,,,,,ta5B9WpNU06af8/MLlNc3w,,,,N,0,0,,,2012-06-19 11:46,2012-06-20 09:59,admin,admin
300,144308,5115,22800,6087,1,0,N,N,N,CP_Drtn,TT_Task,DT_FixedDUR2,RV_OK,TK_NotStart,4229PPV120,Delivery upto site (2nd Batch) for minimal balance,,1592,0,360,0,0,0,360,0,0,0,,,,2013-08-13 08:00,2013-09-26 16:00,,2013-01-26 08:00,2013-03-11 16:00,2013-01-26 08:00,2013-03-11 16:00,2013-01-26 08:00,2013-03-11 16:00,,2013-08-13 08:00,2013-09-26 16:00,,PT_Normal,,,,,sYvpTNiBC0un3LYmK3KElQ,,,,N,0,0,,,2012-06-19 11:46,2012-06-20 09:59,admin,admin
301,144309,5115,22800,6085,1,100,N,N,N,CP_Drtn,TT_Task,DT_FixedDUR2,RV_OK,TK_Complete,4229PPV30,Receive revised commercial offers,,,,0,0,0,0,40,0,0,0,,2012-02-09 00:00,2012-02-22 00:00,2013-01-14 08:00,2013-01-14 08:00,,2012-06-02 00:00,2012-06-02 00:00,,,2012-03-04 08:00,2012-03-08 16:00,,,,,PT_Normal,,,,,xek6D22V0U2MomqJwuVc2g,AYPNiDXaKE6RLh7mqlxUcQ,,,N,0,0,,,2012-06-19 11:46,2012-06-20 10:09,admin,admin
302,144310,5115,22800,6085,1,100,N,N,N,CP_Drtn,TT_Task,DT_FixedDUR2,RV_OK,TK_Complete,4229PPV50,Client approval on bid committee reccomendation,,,,0,0,0,0,16,0,0,0,,2012-03-15 00:00,2012-04-04 00:00,2013-01-14 08:00,2013-01-14 08:00,,2012-06-02 00:00,2012-06-02 00:00,,,2012-04-15 08:00,2012-04-16 16:00,,,,,PT_Normal,,,,,8WuOYJG1hUOIuamu2akOZA,okMlSxQPlUu8ymqN/KtiYQ,,,N,0,0,,,2012-06-19 11:46,2012-06-20 10:09,admin,admin
303,144311,5115,22800,6085,1,0,N,N,N,CP_Drtn,TT_Task,DT_FixedDUR2,RV_OK,TK_NotStart,4229PPV80,L.C issued by Gupco,,1208,0,40,0,0,0,40,0,0,0,,,,2013-01-14 08:00,2013-01-20 16:00,,2012-06-03 08:00,2012-06-07 16:00,2012-06-03 08:00,2012-06-07 16:00,2012-06-03 08:00,2012-06-07 16:00,,2013-01-14 08:00,2013-01-20 16:00,,PT_Normal,,,,,i8tVva9L/kiksOi9rGLDSw,8XeEO//CcEKYVr5WUWm1nw,,,N,0,0,,,2012-06-19 11:46,2012-06-20 09:59,admin,admin
304,144312,5115,22800,6085,1,100,N,N,N,CP_Drtn,TT_Task,DT_FixedDUR2,RV_OK,TK_Complete,4229PPV10,Issue RFQ for Piping valves,,,,0,0,0,0,16,0,0,0,,2011-12-08 00:00,2011-12-08 00:00,2013-01-14 08:00,2013-01-14 08:00,,2012-06-02 00:00,2012-06-02 00:00,,,2012-01-01 08:00,2012-01-02 16:00,,,,,PT_Normal,,,,,3NSbGxmX4kqk6iPW9ArSNw,PapX/E/5VEedYgMn9pW1WA,,,N,0,0,,,2012-06-19 11:46,2012-06-20 10:09,admin,admin
305,144313,5115,22800,6085,1,100,N,N,N,CP_Drtn,TT_LOE,DT_FixedDUR2,RV_OK,TK_Complete,A1110,T.E.R for Piping valves,,,,0,0,0,0,168,0,0,0,,2012-01-12 08:00,2012-02-08 00:00,,,,,,,,2012-01-12 08:00,2012-02-12 16:00,,,,,PT_Normal,,,,,CMmeD9pNykOPqtcZA8B8EA,JiEJ7J2QxUaoab2mldizXA,,,N,0,0,,,2012-06-19 11:46,2012-06-19 11:46,admin,admin
306,144314,5115,22800,6085,1,100,N,N,N,CP_Drtn,TT_LOE,DT_FixedDUR2,RV_OK,TK_Complete,A1380,MRP for Piping valves,,,,0,0,0,0,32,0,0,0,,2012-04-08 08:00,2012-04-12 00:00,,,,,,,,2012-04-08 08:00,2012-04-11 16:00,,,,,PT_Normal,,,,,Hz71G91gO0qTFJo7XwBgyw,HVhuFiMzEUqRKoYy+1e1PQ,,,N,0,0,,,2012-06-19 11:46,2012-06-19 11:46,admin,admin
307,144315,5115,22801,6085,1,100,N,N,N,CP_Drtn,TT_Task,DT_FixedDUR2,RV_OK,TK_Complete,4229PSU70,P.O for solar power unit,,,,0,0,0,0,40,0,0,0,,2012-04-01 08:00,2012-04-04 00:00,2012-12-24 08:00,2012-12-24 08:00,,2012-06-02 00:00,2012-06-02 00:00,,,2012-04-01 08:00,2012-04-05 16:00,,,,,PT_Normal,,,,,KlazaJaXTUKehxA8X/9U9w,AvajsHLxjEGyyQn6kYuXCQ,,,N,0,0,,,2012-06-19 11:46,2012-06-20 10:09,admin,admin
308,144316,5115,22801,6086,1,0,N,N,N,CP_Drtn,TT_Task,DT_FixedDUR2,RV_OK,TK_Active,4229PSU90,Fabrication upto R.F.S,,1552,0,784,0,0,0,1400,0,0,0,,2012-04-05 00:00,,2012-12-31 08:00,2013-04-07 16:00,2012-09-25 16:00,2012-06-08 08:00,2012-09-25 16:00,2012-06-08 08:00,2012-09-25 16:00,2012-04-13 08:00,2012-10-16 16:00,,2012-12-31 08:00,2013-04-07 16:00,,PT_Normal,,,,,3ff7tHOf0UqpLFL95xAjqQ,7UQ9XmTabEqxyA7/76n9MA,,,N,0,0,,,2012-06-19 11:46,2012-06-20 09:59,admin,admin
309,144317,5115,22801,6087,1,0,N,N,N,CP_Drtn,TT_Task,DT_FixedDUR2,RV_OK,TK_NotStart,4229PSU100,Delivery upto site,,2584,560,360,0,0,0,360,0,0,0,,,,2013-08-13 08:00,2013-09-26 16:00,,2012-09-26 08:00,2012-11-09 16:00,2012-09-26 08:00,2012-11-09 16:00,2012-09-26 08:00,2012-11-09 16:00,,2013-08-13 08:00,2013-09-26 16:00,,PT_Normal,,,,,y0DDPSNMoEeRdWE5b8PYfA,Ed1rw6pVGkqfXjRfFT7JpQ,,,N,0,0,,,2012-06-19 11:46,2012-06-20 09:59,admin,admin
310,144318,5115,22801,6085,1,100,N,N,N,CP_Drtn,TT_Task,DT_FixedDUR2,RV_OK,TK_Complete,4229PSU30,Receive revised commercial offers,,,,0,0,0,0,40,0,0,0,,2012-02-01 00:00,2012-02-12 00:00,2012-12-24 08:00,2012-12-24 08:00,,2012-06-02 00:00,2012-06-02 00:00,,,2012-03-04 08:00,2012-03-08 16:00,,,,,PT_Normal,,,,,0XaCssY4QUqabHNXMhFnMA,rsbY6IPE9Ey3ZU3ZNeLLVg,,,N,0,0,,,2012-06-19 11:46,2012-06-20 10:09,admin,admin
311,144319,5115,22801,6085,1,100,N,N,N,CP_Drtn,TT_Task,DT_FixedDUR2,RV_OK,TK_Complete,4229PSU50,Client approval on bid committee reccomendation,,,,0,0,0,0,16,0,0,0,,2012-02-29 00:00,2012-03-11 00:00,2012-12-24 08:00,2012-12-24 08:00,,2012-06-02 00:00,2012-06-02 00:00,,,2012-03-06 08:00,2012-03-07 16:00,,,,,PT_Normal,,,,,YLodXhNT3EuR5QtwaS4JmQ,iKP7vyvUVkGYjFWGXsYtWw,,,N,0,0,,,2012-06-19 11:46,2012-06-20 10:09,admin,admin
312,144320,5115,22801,6085,1,0,N,N,N,CP_Drtn,TT_Task,DT_FixedDUR2,RV_OK,TK_NotStart,4229PSU80,L.C issued by Gupco,,1088,0,40,0,0,0,40,0,0,0,,,,2012-12-24 08:00,2012-12-30 16:00,,2012-06-03 08:00,2012-06-07 16:00,2012-06-03 08:00,2012-06-07 16:00,2012-06-03 08:00,2012-06-07 16:00,,2012-12-24 08:00,2012-12-30 16:00,,PT_Normal,,,,,OkE2UfDNbkmLsl40nasuOg,/xqtBKQ3QEuTmEP+B+vEag,,,N,0,0,,,2012-06-19 11:46,2012-06-20 09:59,admin,admin
313,144321,5115,22801,6085,1,100,N,N,N,CP_Drtn,TT_Task,DT_FixedDUR2,RV_OK,TK_Complete,4229PSU10,Issue RFQ for solar power unit,,,,0,0,0,0,16,0,0,0,,2011-08-23 00:00,2011-08-24 00:00,2012-12-24 08:00,2012-12-24 08:00,,2012-06-02 00:00,2012-06-02 00:00,,,2011-08-15 08:00,2011-08-16 16:00,,,,,PT_Normal,,,,,QK98JXH4rEaOd81PklNxkg,PapX/E/5VEedYgMn9pW1WA,,,N,0,0,,,2012-06-19 11:46,2012-06-20 10:09,admin,admin
314,144322,5115,22801,6085,1,100,N,N,N,CP_Drtn,TT_LOE,DT_FixedDUR2,RV_OK,TK_Complete,A1610,T.ER for solar power unit,,,,0,0,0,0,120,0,0,0,,2011-10-13 00:00,2012-01-31 00:00,,,,,,,,2011-10-02 08:00,2011-10-23 16:00,,,,,PT_Normal,,,,,mB8nI73+U0eLGe1C8dt96A,bw0IVSNTOUG6dpR2CW4B7w,,,N,0,0,,,2012-06-19 11:46,2012-06-19 11:46,admin,admin
315,144323,5115,22801,6085,1,100,N,N,N,CP_Drtn,TT_LOE,DT_FixedDUR2,RV_OK,TK_Complete,A1420,MRP for solar power unit,,,,0,0,0,0,40,0,0,0,,2012-03-08 08:00,2012-03-28 00:00,,,,,,,,2012-03-08 08:00,2012-03-14 16:00,,,,,PT_Normal,,,,,jD9vWzzXFUumN8F196YE/g,1XvuEt/L4kaY7aCpdA1cKA,,,N,0,0,,,2012-06-19 11:46,2012-06-19 11:46,admin,admin
316,144324,5115,22801,6086,1,100,N,N,N,CP_Drtn,TT_Task,DT_FixedDUR2,RV_OK,TK_Complete,4229PSU20,Bidding for solar power unit,,,,0,0,0,0,392,0,0,0,,2011-08-25 00:00,2011-10-13 00:00,2012-12-24 08:00,2012-12-24 08:00,,2012-06-02 00:00,2012-06-02 00:00,,,2011-08-17 08:00,2011-10-04 16:00,,,,,PT_Normal,,,,,jgigbS9ARUSx9LP7FggAbw,WAPraHdgpEiuGrgnPTRw+A,,,N,0,0,,,2012-06-19 11:46,2012-06-20 10:09,admin,admin
317,144325,5115,22801,6085,1,100,N,N,N,CP_Drtn,TT_Task,DT_FixedDUR2,RV_OK,TK_Complete,4229PSU40,commercial evaluation & bid committee for solar power unit,,,,0,0,0,0,120,0,0,0,,2012-02-13 00:00,2012-02-29 00:00,2012-12-24 08:00,2012-12-24 08:00,,2012-06-02 00:00,2012-06-02 00:00,,,2012-03-11 08:00,2012-03-29 16:00,,,,,PT_Normal,,,,,CJJrMiGKvU2nnTdHOXyiwg,e/V43NRVMUS133iTAw1J2Q,,,N,0,0,,,2012-06-19 11:46,2012-06-20 10:09,admin,admin
318,144326,5115,22801,6085,1,100,N,N,N,CP_Drtn,TT_Task,DT_FixedDUR2,RV_OK,TK_Complete,4229PSU60,F.O.C for solar power unit,,,,0,0,0,0,24,0,0,0,,2012-03-28 00:00,2012-03-28 00:00,2012-12-24 08:00,2012-12-24 08:00,,2012-06-02 00:00,2012-06-02 00:00,,,2012-04-01 08:00,2012-04-03 16:00,,,,,PT_Normal,,,,,Irj4BdpDTkinOJXJckov4Q,4AXOah8HAEeGpjijEBPUrg,,,N,0,0,,,2012-06-19 11:46,2012-06-20 10:09,admin,admin
319,144327,5115,22802,6086,1,0,N,N,N,CP_Drtn,TT_Task,DT_FixedDUR2,RV_OK,TK_Active,4229PNA90,Fabrication upto R.F.S,,1720,0,192,0,0,0,1040,0,0,0,,2012-02-01 00:00,,2013-01-21 08:00,2013-02-13 16:00,2012-07-01 16:00,2012-06-08 08:00,2012-07-01 16:00,2012-06-08 08:00,2012-07-01 16:00,2012-04-06 08:00,2012-08-13 16:00,,2013-01-21 08:00,2013-02-13 16:00,,PT_Normal,,,,,3atuI5V98kycwRtuGHP6Cw,ToVb42xRg0G2L0I31B6C+Q,,,N,0,0,,,2012-06-19 11:46,2012-06-20 09:59,admin,admin
320,144328,5115,22802,6087,1,0,N,N,N,CP_Drtn,TT_Task,DT_FixedDUR2,RV_OK,TK_NotStart,4229PNA100,Delivery upto site,,3272,1248,360,0,0,0,360,0,0,0,,,,2013-08-13 08:00,2013-09-26 16:00,,2012-07-02 08:00,2012-08-15 16:00,2012-07-02 08:00,2012-08-15 16:00,2012-07-02 08:00,2012-08-15 16:00,,2013-08-13 08:00,2013-09-26 16:00,,PT_Normal,,,,,HZgC5h1Qg027z2UxpEJePA,lldIlyG8m0eNSv8NbxWToA,,,N,0,0,,,2012-06-19 11:46,2012-06-20 09:59,admin,admin
321,144329,5115,22802,6085,1,100,N,N,N,CP_Drtn,TT_Task,DT_FixedDUR2,RV_OK,TK_Complete,4229PNA30,Receive revised commercial offers,,,,0,0,0,0,40,0,0,0,,2011-12-08 08:00,2011-12-13 00:00,2013-01-14 08:00,2013-01-14 08:00,,2012-06-02 00:00,2012-06-02 00:00,,,2011-12-08 08:00,2011-12-14 16:00,,,,,PT_Normal,,,,,YOCPUUbbHEa4kVMUe6B9vw,rsbY6IPE9Ey3ZU3ZNeLLVg,,,N,0,0,,,2012-06-19 11:46,2012-06-20 10:09,admin,admin
322,144330,5115,22802,6085,1,100,N,N,N,CP_Drtn,TT_Task,DT_FixedDUR2,RV_OK,TK_Complete,4229PNA50,Client approval on bid committee reccomendation,,,,0,0,0,0,16,0,0,0,,2011-12-13 08:00,2012-01-11 16:00,2013-01-14 08:00,2013-01-14 08:00,,2012-06-02 00:00,2012-06-02 00:00,,,2011-12-13 08:00,2011-12-14 16:00,,,,,PT_Normal,,,,,7JIEWM1PzEyr4KCfqpAHNQ,iKP7vyvUVkGYjFWGXsYtWw,,,N,0,0,,,2012-06-19 11:46,2012-06-20 10:09,admin,admin
323,144331,5115,22802,6085,1,0,N,N,N,CP_Drtn,TT_Task,DT_FixedDUR2,RV_OK,TK_NotStart,4229PNA80,L.C issued by Gupco,,1208,0,40,0,0,0,40,0,0,0,,,,2013-01-14 08:00,2013-01-20 16:00,,2012-06-03 08:00,2012-06-07 16:00,2012-06-03 08:00,2012-06-07 16:00,2012-06-03 08:00,2012-06-07 16:00,,2013-01-14 08:00,2013-01-20 16:00,,PT_Normal,,,,,DJvbsqHHiE+1s9CgZBpT9Q,/xqtBKQ3QEuTmEP+B+vEag,,,N,0,0,,,2012-06-19 11:46,2012-06-20 09:59,admin,admin
324,144332,5115,22802,6085,1,100,N,N,N,CP_Drtn,TT_Task,DT_FixedDUR2,RV_OK,TK_Complete,4229PNA10,Issue RFQ for Navigation aids,,,,0,0,0,0,16,0,0,0,,2011-09-18 00:00,2011-09-18 00:00,2013-01-14 08:00,2013-01-14 08:00,,2012-06-02 00:00,2012-06-02 00:00,,,2011-08-15 08:00,2011-08-16 16:00,,,,,PT_Normal,,,,,VJnniGuucEWBhvHCSjO6hA,PapX/E/5VEedYgMn9pW1WA,,,N,0,0,,,2012-06-19 11:46,2012-06-20 10:09,admin,admin
325,144333,5115,22802,6086,1,100,N,N,N,CP_Drtn,TT_Task,DT_FixedDUR2,RV_OK,TK_Complete,4229PNA20,Bidding for Navigation aids,,,,0,0,0,0,488,0,0,0,,2011-09-19 00:00,2011-10-16 16:00,2013-01-14 08:00,2013-01-14 08:00,,2012-06-02 00:00,2012-06-02 00:00,,,2011-08-17 08:00,2011-10-16 16:00,,,,,PT_Normal,,,,,6UAWTKKfh06QdK1mAW2gOQ,WAPraHdgpEiuGrgnPTRw+A,,,N,0,0,,,2012-06-19 11:46,2012-06-20 10:09,admin,admin
326,144334,5115,22802,6085,1,100,N,N,N,CP_Drtn,TT_Task,DT_FixedDUR2,RV_OK,TK_Complete,4229PNA40,commercial evaluation & bid committee for Navigation aids,,,,0,0,0,0,80,0,0,0,,2011-12-14 00:00,2011-12-21 00:00,2013-01-14 08:00,2013-01-14 08:00,,2012-06-02 00:00,2012-06-02 00:00,,,2011-12-15 08:00,2011-12-28 16:00,,,,,PT_Normal,,,,,/CaaVF8uCkaHcaOfZJjihw,e/V43NRVMUS133iTAw1J2Q,,,N,0,0,,,2012-06-19 11:46,2012-06-20 10:09,admin,admin
327,144335,5115,22802,6085,1,100,N,N,N,CP_Drtn,TT_Task,DT_FixedDUR2,RV_OK,TK_Complete,4229PNA60,F.O.C for Navigation aids,,,,0,0,0,0,24,0,0,0,,2012-01-11 08:00,2012-01-12 00:00,2013-01-14 08:00,2013-01-14 08:00,,2012-06-02 00:00,2012-06-02 00:00,,,2012-01-11 08:00,2012-01-15 16:00,,,,,PT_Normal,,,,,R/m5TuxQ5USPXxx38/a9Hg,4AXOah8HAEeGpjijEBPUrg,,,N,0,0,,,2012-06-19 11:46,2012-06-20 10:09,admin,admin
328,144336,5115,22802,6085,1,100,N,N,N,CP_Drtn,TT_Task,DT_FixedDUR2,RV_OK,TK_Complete,4229PNA70,P.O for Navigation aids,,,,0,0,0,0,40,0,0,0,,2012-01-19 08:00,2012-02-01 16:00,2013-01-14 08:00,2013-01-14 08:00,,2012-06-02 00:00,2012-06-02 00:00,,,2012-01-19 08:00,2012-01-26 16:00,,,,,PT_Normal,,,,,LXtQ4fHGb0+P3POTY4sOAA,AvajsHLxjEGyyQn6kYuXCQ,,,N,0,0,,,2012-06-19 11:46,2012-06-20 10:09,admin,admin
329,144337,5115,22802,6085,1,100,N,N,N,CP_Drtn,TT_LOE,DT_FixedDUR2,RV_OK,TK_Complete,4229EEL320,T.E.R for Navigation aids,,,,0,0,0,0,120,0,0,0,,2011-10-17 08:00,2011-12-07 16:00,,,,,,,,2011-10-17 08:00,2011-11-13 16:00,,,,,PT_Normal,,,,,fFE244IVB0iJXPuI55OB0A,swX0p19rSUOIwyjGZHXYnw,,,N,0,0,,,2012-06-19 11:46,2012-06-19 11:46,admin,admin
330,144338,5115,22802,6085,1,100,N,N,N,CP_Drtn,TT_LOE,DT_FixedDUR2,RV_OK,TK_Complete,A1430,MRP for Navigation aids,,,,0,0,0,0,32,0,0,0,,2012-01-12 00:00,2012-01-18 00:00,,,,,,,,2012-01-12 08:00,2012-01-17 16:00,,,,,PT_Normal,,,,,gOZonXRTiEKF9ifOnlkqEg,IE+e2ItCW0OvW1HQfUiFIA,,,N,0,0,,,2012-06-19 11:46,2012-06-19 11:46,admin,admin
331,144339,5115,22803,6086,1,0,N,N,N,CP_Drtn,TT_Task,DT_FixedDUR2,RV_OK,TK_NotStart,4229PEB90,Fabrication upto R.F.S,,2312,0,720,0,0,0,720,0,0,0,,,,2013-05-15 08:00,2013-08-12 16:00,,2012-07-18 08:00,2012-10-27 16:00,2012-07-18 08:00,2012-10-27 16:00,2012-07-18 08:00,2012-10-27 16:00,,2013-05-15 08:00,2013-08-12 16:00,,PT_Normal,,,,,jt2ZMLMJ1U+Oi1N9MRLRwQ,7UQ9XmTabEqxyA7/76n9MA,,,N,0,0,,,2012-06-19 11:46,2012-06-20 09:59,admin,admin
332,144340,5115,22803,6087,1,0,N,N,N,CP_Drtn,TT_Task,DT_FixedDUR2,RV_OK,TK_NotStart,4229PEB100,Delivery upto site,,2328,304,360,0,0,0,360,0,0,0,,,,2013-08-13 08:00,2013-09-26 16:00,,2012-10-28 08:00,2012-12-11 16:00,2012-10-28 08:00,2012-12-11 16:00,2012-10-28 08:00,2012-12-11 16:00,,2013-08-13 08:00,2013-09-26 16:00,,PT_Normal,,,,,cuyWtGR8IUeGy4WddxSpPw,Ed1rw6pVGkqfXjRfFT7JpQ,,,N,0,0,,,2012-06-19 11:46,2012-06-20 09:59,admin,admin
333,144341,5115,22803,6085,1,0,N,N,N,CP_Drtn,TT_Task,DT_FixedDUR2,RV_OK,TK_NotStart,4229PEB30,Receive revised commercial offers,,1640,0,40,0,0,0,40,0,0,0,,,,2013-04-01 08:00,2013-04-07 16:00,,2012-06-04 08:00,2012-06-10 16:00,2012-06-04 08:00,2012-06-10 16:00,2012-06-04 08:00,2012-06-10 16:00,,2013-04-01 08:00,2013-04-07 16:00,,PT_Normal,,,,,CgybD+zPF0GH3+QgRKw2Dg,rsbY6IPE9Ey3ZU3ZNeLLVg,,,N,0,0,,,2012-06-19 11:46,2012-06-20 09:59,admin,admin
334,144342,5115,22803,6085,1,0,N,N,N,CP_Drtn,TT_Task,DT_FixedDUR2,RV_OK,TK_NotStart,4229PEB50,Client approval on bid committee reccomendation,,1640,0,16,0,0,0,16,0,0,0,,,,2013-04-22 08:00,2013-04-23 16:00,,2012-06-25 08:00,2012-06-26 16:00,2012-06-25 08:00,2012-06-26 16:00,2012-06-25 08:00,2012-06-26 16:00,,2013-04-22 08:00,2013-04-23 16:00,,PT_Normal,,,,,nRs35hCfh0GMeKxiVHBtTQ,iKP7vyvUVkGYjFWGXsYtWw,,,N,0,0,,,2012-06-19 11:46,2012-06-20 09:59,admin,admin
335,144343,5115,22803,6085,1,0,N,N,N,CP_Drtn,TT_Task,DT_FixedDUR2,RV_OK,TK_NotStart,4229PEB80,L.C issued by Gupco,,1640,0,40,0,0,0,40,0,0,0,,,,2013-05-08 08:00,2013-05-14 16:00,,2012-07-11 08:00,2012-07-17 16:00,2012-07-11 08:00,2012-07-17 16:00,2012-07-11 08:00,2012-07-17 16:00,,2013-05-08 08:00,2013-05-14 16:00,,PT_Normal,,,,,vc43gHO9AEC6a7pA49eULg,/xqtBKQ3QEuTmEP+B+vEag,,,N,0,0,,,2012-06-19 11:46,2012-06-20 09:59,admin,admin
336,144344,5115,22803,6085,1,100,N,N,N,CP_Drtn,TT_Task,DT_FixedDUR2,RV_OK,TK_Complete,4229PEB10,Issue RFQ for Electrical bulk,,,,0,0,0,0,16,0,0,0,,2011-12-28 00:00,2011-12-29 00:00,2013-03-31 08:00,2013-03-31 08:00,,2012-06-02 00:00,2012-06-02 00:00,,,2012-01-11 08:00,2012-01-12 16:00,,,,,PT_Normal,,,,,ljtZPJoxPUiwnGjmIiWV3A,PapX/E/5VEedYgMn9pW1WA,,,N,0,0,,,2012-06-19 11:46,2012-06-20 10:09,admin,admin
337,144345,5115,22803,6086,1,100,N,N,N,CP_Drtn,TT_Task,DT_FixedDUR2,RV_OK,TK_Complete,4229PEB20,Bidding for Electrical bulk,,,,0,0,0,0,200,0,0,0,,2011-12-30 00:00,2012-02-01 00:00,2013-03-31 08:00,2013-03-31 08:00,,2012-06-02 00:00,2012-06-02 00:00,,,2012-01-13 08:00,2012-02-07 16:00,,,,,PT_Normal,,,,,GSnbwm/ZbUuONB8zs/8R4g,WAPraHdgpEiuGrgnPTRw+A,,,N,0,0,,,2012-06-19 11:46,2012-06-20 10:09,admin,admin
338,144346,5115,22803,6085,1,0,N,N,N,CP_Drtn,TT_Task,DT_FixedDUR2,RV_OK,TK_NotStart,4229PEB40,commercial evaluation & bid committee for Electrical bulk,,1640,0,80,0,0,0,80,0,0,0,,,,2013-04-08 08:00,2013-04-21 16:00,,2012-06-11 08:00,2012-06-24 16:00,2012-06-11 08:00,2012-06-24 16:00,2012-06-11 08:00,2012-06-24 16:00,,2013-04-08 08:00,2013-04-21 16:00,,PT_Normal,,,,,Cje77CU3FEO2FEL6Cjckjw,e/V43NRVMUS133iTAw1J2Q,,,N,0,0,,,2012-06-19 11:46,2012-06-20 09:59,admin,admin
339,144347,5115,22803,6085,1,0,N,N,N,CP_Drtn,TT_Task,DT_FixedDUR2,RV_OK,TK_NotStart,4229PEB60,F.O.C for Electrical bulk,,1640,0,24,0,0,0,24,0,0,0,,,,2013-04-24 08:00,2013-04-28 16:00,,2012-06-27 08:00,2012-07-01 16:00,2012-06-27 08:00,2012-07-01 16:00,2012-06-27 08:00,2012-07-01 16:00,,2013-04-24 08:00,2013-04-28 16:00,,PT_Normal,,,,,hoPqhnNYy0eUxdZZ7CfcCA,4AXOah8HAEeGpjijEBPUrg,,,N,0,0,,,2012-06-19 11:46,2012-06-20 09:59,admin,admin
340,144348,5115,22803,6085,1,0,N,N,N,CP_Drtn,TT_Task,DT_FixedDUR2,RV_OK,TK_NotStart,4229PEB70,P.O for Electrical bulk,,1640,0,16,0,0,0,16,0,0,0,,,,2013-05-06 08:00,2013-05-07 16:00,,2012-07-09 08:00,2012-07-10 16:00,2012-07-09 08:00,2012-07-10 16:00,2012-07-09 08:00,2012-07-10 16:00,,2013-05-06 08:00,2013-05-07 16:00,,PT_Normal,,,,,syDsMT8znkSiVnBoeSglZA,AvajsHLxjEGyyQn6kYuXCQ,,,N,0,0,,,2012-06-19 11:46,2012-06-20 09:59,admin,admin
341,144349,5115,22803,6085,1,0,N,N,N,CP_Drtn,TT_LOE,DT_FixedDUR2,RV_OK,TK_Active,4229EEL310,T.E.R for Electrical bulk,,1640,0,8,0,0,0,120,0,0,0,,2012-02-02 00:00,,2012-02-02 08:00,2013-03-31 16:00,,2012-06-03 08:00,2012-06-03 16:00,2012-06-03 08:00,2012-06-03 16:00,2012-03-05 08:00,2012-03-25 16:00,,2012-02-02 08:00,2013-03-31 16:00,,PT_Normal,,,,,mMLfA1Y4k0WZkTpg1QNhJw,zLLzeS/iI0W7cqmCLSb03g,,,N,0,0,,,2012-06-19 11:46,2012-06-20 10:09,admin,admin
342,144350,5115,22803,6085,1,0,N,N,N,CP_Drtn,TT_LOE,DT_FixedDUR2,RV_OK,TK_NotStart,A1440,MRP for Electrical bulk,,1640,0,40,0,0,0,40,0,0,0,,,,2013-04-29 08:00,2013-05-05 16:00,,2012-07-02 08:00,2012-07-08 16:00,2012-07-02 08:00,2012-07-08 16:00,2012-07-02 08:00,2012-07-08 16:00,,2013-04-29 08:00,2013-05-05 16:00,,PT_Normal,,,,,yAd3jlW9M0arT27XPdBLHw,cKQxE56q/ESdNlpuAltyIQ,,,N,0,0,,,2012-06-19 11:46,2012-06-20 10:09,admin,admin
343,144351,5115,22804,6085,1,0,N,N,N,CP_Drtn,TT_Task,DT_FixedDUR2,RV_OK,TK_NotStart,4229PIB1020,Receive revised commercial offers,,1728,0,40,0,0,0,40,0,0,0,,,,2013-04-16 08:00,2013-04-22 16:00,,2012-06-04 08:00,2012-06-10 16:00,2012-06-04 08:00,2012-06-10 16:00,2012-06-04 08:00,2012-06-10 16:00,,2013-04-16 08:00,2013-04-22 16:00,,PT_Normal,,,,,hMRELjwMLUqk2fOq4O3CzQ,AYPNiDXaKE6RLh7mqlxUcQ,,,N,0,0,,,2012-06-19 11:46,2012-06-20 09:59,admin,admin
344,144352,5115,22804,6085,1,0,N,N,N,CP_Drtn,TT_Task,DT_FixedDUR2,RV_OK,TK_NotStart,4229PIB1040,Client approval on bid committee reccomendation,,1728,0,16,0,0,0,16,0,0,0,,,,2013-05-07 08:00,2013-05-08 16:00,,2012-06-25 08:00,2012-06-26 16:00,2012-06-25 08:00,2012-06-26 16:00,2012-06-25 08:00,2012-06-26 16:00,,2013-05-07 08:00,2013-05-08 16:00,,PT_Normal,,,,,vdND6W1W1Uy4ZPtSUvkjUA,okMlSxQPlUu8ymqN/KtiYQ,,,N,0,0,,,2012-06-19 11:46,2012-06-20 09:59,admin,admin
345,144353,5115,22804,6085,1,0,N,N,N,CP_Drtn,TT_Task,DT_FixedDUR2,RV_OK,TK_NotStart,4229PIB1070,L.C issued by Gupco,,1728,0,40,0,0,0,40,0,0,0,,,,2013-05-23 08:00,2013-05-29 16:00,,2012-07-11 08:00,2012-07-17 16:00,2012-07-11 08:00,2012-07-17 16:00,2012-07-11 08:00,2012-07-17 16:00,,2013-05-23 08:00,2013-05-29 16:00,,PT_Normal,,,,,wK3lv1CYPU6COYrIhiygVA,8XeEO//CcEKYVr5WUWm1nw,,,N,0,0,,,2012-06-19 11:46,2012-06-20 09:59,admin,admin
346,144354,5115,22804,6086,1,0,N,N,N,CP_Drtn,TT_Task,DT_FixedDUR2,RV_OK,TK_NotStart,4229PIB1080,Fabrication upto R.F.S,,2432,0,720,0,0,0,720,0,0,0,,,,2013-05-30 08:00,2013-08-27 16:00,,2012-07-18 08:00,2012-10-27 16:00,2012-07-18 08:00,2012-10-27 16:00,2012-07-18 08:00,2012-10-27 16:00,,2013-05-30 08:00,2013-08-27 16:00,,PT_Normal,,,,,oArg7U4pBkqks7tqMYwGbg,,,,N,0,0,,,2012-06-19 11:46,2012-06-20 09:59,admin,admin
347,144355,5115,22804,6087,1,0,N,N,N,CP_Drtn,TT_Task,DT_FixedDUR2,RV_OK,TK_NotStart,4229PIB1090,Delivery upto site,,2448,424,240,0,0,0,240,0,0,0,,,,2013-08-28 08:00,2013-09-26 16:00,,2012-10-28 08:00,2012-11-26 16:00,2012-10-28 08:00,2012-11-26 16:00,2012-10-28 08:00,2012-11-26 16:00,,2013-08-28 08:00,2013-09-26 16:00,,PT_Normal,,,,,Fo2QOM8fKUm/fM5vLl8RSg,,,,N,0,0,,,2012-06-19 11:46,2012-06-20 09:59,admin,admin
348,144356,5115,22804,6085,1,100,N,N,N,CP_Drtn,TT_Task,DT_FixedDUR2,RV_OK,TK_Complete,4229PIB1000,Issue RFQ for Instrument electrical bulk,,,,0,0,0,0,8,0,0,0,,2012-02-29 00:00,2012-03-04 00:00,2013-04-15 08:00,2013-04-15 08:00,,2012-06-02 00:00,2012-06-02 00:00,,,2012-02-13 08:00,2012-02-13 16:00,,,,,PT_Normal,,,,,6xpd7UdDlkO8c6LjNVjKag,JI5SVA605USWDWBKpsEVTw,,,N,0,0,,,2012-06-19 11:46,2012-06-20 10:09,admin,admin
349,144357,5115,22804,6086,1,100,N,N,N,CP_Drtn,TT_Task,DT_FixedDUR2,RV_OK,TK_Complete,4229PIB1010,Bidding for Instrument electrical bulk,,,,0,0,0,0,200,0,0,0,,2012-03-05 00:00,2012-03-26 00:00,2013-04-15 08:00,2013-04-15 08:00,,2012-06-02 00:00,2012-06-02 00:00,,,2012-03-31 08:00,2012-04-24 16:00,,,,,PT_Normal,,,,,LlCb0juICUmdGnojR0775w,9MnOz/vVdkC9ctNWH2r8qg,,,N,0,0,,,2012-06-19 11:46,2012-06-20 10:09,admin,admin
350,144358,5115,22804,6085,1,0,N,N,N,CP_Drtn,TT_Task,DT_FixedDUR2,RV_OK,TK_NotStart,4229PIB1030,commercial evaluation & bid committee for Instrument electrical bulk,,1728,0,80,0,0,0,80,0,0,0,,,,2013-04-23 08:00,2013-05-06 16:00,,2012-06-11 08:00,2012-06-24 16:00,2012-06-11 08:00,2012-06-24 16:00,2012-06-11 08:00,2012-06-24 16:00,,2013-04-23 08:00,2013-05-06 16:00,,PT_Normal,,,,,6jbqy2kTVkSTBBwqDcPufg,HB71H4gGzEi8k5nywomlQQ,,,N,0,0,,,2012-06-19 11:46,2012-06-20 09:59,admin,admin
351,144359,5115,22804,6085,1,0,N,N,N,CP_Drtn,TT_Task,DT_FixedDUR2,RV_OK,TK_NotStart,4229PIB1050,F.O.C for Instrument electrical bulk,,1728,0,24,0,0,0,24,0,0,0,,,,2013-05-09 08:00,2013-05-13 16:00,,2012-06-27 08:00,2012-07-01 16:00,2012-06-27 08:00,2012-07-01 16:00,2012-06-27 08:00,2012-07-01 16:00,,2013-05-09 08:00,2013-05-13 16:00,,PT_Normal,,,,,N8qTCMU2p0G8OpEEXHZXkg,FKG5q0XubUmv7n25cBnM+A,,,N,0,0,,,2012-06-19 11:46,2012-06-20 09:59,admin,admin
352,144360,5115,22804,6085,1,0,N,N,N,CP_Drtn,TT_Task,DT_FixedDUR2,RV_OK,TK_NotStart,4229PIB1060,P.O for Instrument electrical bulk,,1728,0,16,0,0,0,16,0,0,0,,,,2013-05-21 08:00,2013-05-22 16:00,,2012-07-09 08:00,2012-07-10 16:00,2012-07-09 08:00,2012-07-10 16:00,2012-07-09 08:00,2012-07-10 16:00,,2013-05-21 08:00,2013-05-22 16:00,,PT_Normal,,,,,FEYeWV14oEOCV9YHFIFgTA,3CKBmFUDZUiNIm/ll8DEwg,,,N,0,0,,,2012-06-19 11:46,2012-06-20 09:59,admin,admin
353,144361,5115,22804,6085,1,0,N,N,N,CP_Drtn,TT_LOE,DT_FixedDUR2,RV_OK,TK_Active,A1300,T.E.R for Instrument electrical bulk,,1728,0,8,0,0,0,120,0,0,0,,2012-03-26 00:00,,2012-03-26 08:00,2013-04-15 16:00,,2012-06-03 08:00,2012-06-03 16:00,2012-06-03 08:00,2012-06-03 16:00,2012-04-25 08:00,2012-05-15 16:00,,2012-03-26 08:00,2013-04-15 16:00,,PT_Normal,,,,,HCYultY3fUqY0xWNcyOK+A,vrPHaFUofUCwSCVvqK7yeg,,,N,0,0,,,2012-06-19 11:46,2012-06-20 10:09,admin,admin
354,144362,5115,22804,6085,1,0,N,N,N,CP_Drtn,TT_LOE,DT_FixedDUR2,RV_OK,TK_NotStart,A1520,MRP for Instrument electrical bulk,,1728,0,40,0,0,0,40,0,0,0,,,,2013-05-14 08:00,2013-05-20 16:00,,2012-07-02 08:00,2012-07-08 16:00,2012-07-02 08:00,2012-07-08 16:00,2012-07-02 08:00,2012-07-08 16:00,,2013-05-14 08:00,2013-05-20 16:00,,PT_Normal,,,,,Ogbgda/RMUiT5NM0p6iX7g,u5tHcOB7wkGarPuA3vE6Rw,,,N,0,0,,,2012-06-19 11:46,2012-06-20 10:09,admin,admin
355,144363,5115,22805,6085,1,100,N,N,N,CP_Drtn,TT_Task,DT_FixedDUR2,RV_OK,TK_Complete,4229PIB60,F.O.C for Instrument mechanical bulk,,,,0,0,0,0,24,0,0,0,,2012-05-31 00:00,2012-05-31 00:00,2013-08-15 08:00,2013-08-15 08:00,,2012-06-02 00:00,2012-06-02 00:00,,,2012-06-26 08:00,2012-06-28 16:00,,,,,PT_Normal,,,,,7EvnxUX6m0iXqeQRiI4LGA,wvJHlYKuYEiMge3zEAW6dQ,,,N,0,0,,,2012-06-19 11:46,2012-06-20 10:09,admin,admin
356,144364,5115,22805,6085,1,100,N,N,N,CP_Drtn,TT_Task,DT_FixedDUR2,RV_OK,TK_Complete,4229PIB70,P.O for Instrument mechanical bulk,,,,0,0,0,0,16,0,0,0,,2012-05-31 00:00,2012-05-31 00:00,2013-08-15 08:00,2013-08-15 08:00,,2012-06-02 00:00,2012-06-02 00:00,,,2012-07-01 08:00,2012-07-02 16:00,,,,,PT_Normal,,,,,GuduMM1/50i/JThd5zS+Yg,hWfotYgdCUObagj6utqawQ,,,N,0,0,,,2012-06-19 11:46,2012-06-20 10:09,admin,admin
357,144365,5115,22805,6086,1,100,N,N,N,CP_Drtn,TT_Task,DT_FixedDUR2,RV_OK,TK_Complete,4229PIB90,Fabrication upto R.F.S,,,,0,0,0,0,720,0,0,0,,2012-05-31 00:00,2012-05-31 00:00,2013-08-15 08:00,2013-08-15 08:00,,2012-06-02 00:00,2012-06-02 00:00,,,2012-07-10 08:00,2012-10-19 16:00,,,,,PT_Normal,,,,,V53Qn2AkeE+qYwfnEGl47g,7UQ9XmTabEqxyA7/76n9MA,,,N,0,0,,,2012-06-19 11:46,2012-06-20 10:09,admin,admin
358,144366,5115,22805,6087,1,100,N,N,N,CP_Drtn,TT_Task,DT_FixedDUR2,RV_OK,TK_Complete,4229PIB100,Delivery upto site,,,,0,0,0,0,280,0,0,0,,2012-05-31 00:00,2012-05-31 00:00,2013-09-26 16:00,2013-09-26 16:00,,2012-06-02 00:00,2012-06-02 00:00,,,2012-10-20 08:00,2012-11-23 16:00,,,,,PT_Normal,,,,,dsC3ljMU0UusUL2684ofCg,Ed1rw6pVGkqfXjRfFT7JpQ,,,N,0,0,,,2012-06-19 11:46,2012-06-20 10:09,admin,admin
359,144367,5115,22805,6085,1,100,N,N,N,CP_Drtn,TT_Task,DT_FixedDUR2,RV_OK,TK_Complete,4229PIB30,Receive revised commercial offers,,,,0,0,0,0,40,0,0,0,,2012-05-30 00:00,2012-05-30 00:00,2013-08-15 08:00,2013-08-15 08:00,,2012-06-02 00:00,2012-06-02 00:00,,,2012-06-03 08:00,2012-06-07 16:00,,,,,PT_Normal,,,,,9xjaWyw2kkOUwLNh1GFpEg,AYPNiDXaKE6RLh7mqlxUcQ,,,N,0,0,,,2012-06-19 11:46,2012-06-20 10:09,admin,admin
360,144368,5115,22805,6085,1,100,N,N,N,CP_Drtn,TT_Task,DT_FixedDUR2,RV_OK,TK_Complete,4229PIB50,Client approval on bid committee reccommendation,,,,0,0,0,0,16,0,0,0,,2012-05-31 00:00,2012-05-31 00:00,2013-08-15 08:00,2013-08-15 08:00,,2012-06-02 00:00,2012-06-02 00:00,,,2012-06-24 08:00,2012-06-25 16:00,,,,,PT_Normal,,,,,TuyoFwdmFEqbwyZP0Fc1Yw,okMlSxQPlUu8ymqN/KtiYQ,,,N,0,0,,,2012-06-19 11:46,2012-06-20 10:09,admin,admin
361,144369,5115,22805,6085,1,100,N,N,N,CP_Drtn,TT_Task,DT_FixedDUR2,RV_OK,TK_Complete,4229PIB80,L.C issued by Gupco,,,,0,0,0,0,40,0,0,0,,2012-05-31 00:00,2012-05-31 00:00,2013-08-15 08:00,2013-08-15 08:00,,2012-06-02 00:00,2012-06-02 00:00,,,2012-07-03 08:00,2012-07-09 16:00,,,,,PT_Normal,,,,,fMPvOPpbQEWyDG++p0Kqag,8XeEO//CcEKYVr5WUWm1nw,,,N,0,0,,,2012-06-19 11:46,2012-06-20 10:09,admin,admin
362,144370,5115,22805,6085,1,100,N,N,N,CP_Drtn,TT_Task,DT_FixedDUR2,RV_OK,TK_Complete,4229PIB10,Issue RFQ for Instrument mechanical bulk,,,,0,0,0,0,16,0,0,0,,2012-01-25 00:00,2012-02-21 00:00,2013-08-15 08:00,2013-08-15 08:00,,2012-06-02 00:00,2012-06-02 00:00,,,2012-02-13 08:00,2012-02-14 16:00,,,,,PT_Normal,,,,,ddOasTbjjUqyMvGhM4W+MA,OCnd8pP/p0aatV0O4h2pyA,,,N,0,0,,,2012-06-19 11:46,2012-06-20 10:09,admin,admin
363,144371,5115,22805,6086,1,100,N,N,N,CP_Drtn,TT_Task,DT_FixedDUR2,RV_OK,TK_Complete,4229PIB20,Bidding for Instrument mechanical bulk,,,,0,0,0,0,144,0,0,0,,2012-02-22 00:00,2012-03-29 00:00,2013-08-15 08:00,2013-08-15 08:00,,2012-06-02 00:00,2012-06-02 00:00,,,2012-03-03 08:00,2012-03-20 16:00,,,,,PT_Normal,,,,,dJ88yYKgJUWYiM7mjlKg3Q,Qw2K70fh0Uyvygb6Wxm90Q,,,N,0,0,,,2012-06-19 11:46,2012-06-20 10:09,admin,admin
364,144372,5115,22805,6085,1,100,N,N,N,CP_Drtn,TT_Task,DT_FixedDUR2,RV_OK,TK_Complete,4229PIB40,commercial evaluation & bid committee for Instrument mechanical bulk,,,,0,0,0,0,80,0,0,0,,2012-05-31 00:00,2012-05-31 00:00,2013-08-15 08:00,2013-08-15 08:00,,2012-06-02 00:00,2012-06-02 00:00,,,2012-06-10 08:00,2012-06-21 16:00,,,,,PT_Normal,,,,,/ZLK7UiuxEuTtfb/uVUZOg,YJ2YdK0gtkq3MSsnZFqeCg,,,N,0,0,,,2012-06-19 11:46,2012-06-20 10:09,admin,admin
365,144373,5115,22805,6085,1,100,N,N,N,CP_Drtn,TT_LOE,DT_FixedDUR2,RV_OK,TK_Complete,A1250,T.E.R for Instrument  Mechanical bulk,,,,0,0,0,0,120,0,0,0,,2012-03-27 00:00,2012-03-27 00:00,,,,,,,,2012-04-01 08:00,2012-04-19 16:00,,,,,PT_Normal,,,,,COY0vU0CmEOmAymkMiZ+yA,GZpEktvPQkCIPEkPnxCk+g,,,N,0,0,,,2012-06-19 11:46,2012-06-19 11:46,admin,admin
366,144374,5115,22805,6085,1,100,N,N,N,CP_Drtn,TT_LOE,DT_FixedDUR2,RV_OK,TK_Complete,A1510,MRP for Instrument Mechanical bulk,,,,0,0,0,0,8,0,0,0,,2012-05-31 00:00,2012-05-31 16:00,,,,,,,,2012-05-31 08:00,2012-05-31 16:00,,,,,PT_Normal,,,,,W2HK+wb9TESt8ZLjuwFdfw,Eo245czxY0mc5Pbd3SnqwA,,,N,0,0,,,2012-06-19 11:46,2012-06-19 11:46,admin,admin
367,144375,5115,22806,6085,1,0,N,N,N,CP_Drtn,TT_Task,DT_FixedDUR2,RV_OK,TK_NotStart,4229PFI60,F.O.C for field Instrument,,1576,0,24,0,0,0,24,0,0,0,,,,2013-04-04 08:00,2013-04-08 16:00,,2012-06-19 08:00,2012-06-21 16:00,2012-06-19 08:00,2012-06-21 16:00,2012-06-19 08:00,2012-06-21 16:00,,2013-04-04 08:00,2013-04-08 16:00,,PT_Normal,,,,,BAGd/o0yfE+6D5mkTgnWZw,4AXOah8HAEeGpjijEBPUrg,,,N,0,0,,,2012-06-19 11:46,2012-06-20 09:59,admin,admin
368,144376,5115,22806,6085,1,0,N,N,N,CP_Drtn,TT_Task,DT_FixedDUR2,RV_OK,TK_NotStart,4229PFI70,P.O for field Instrument,,1576,0,16,0,0,0,16,0,0,0,,,,2013-04-16 08:00,2013-04-17 16:00,,2012-07-01 08:00,2012-07-02 16:00,2012-07-01 08:00,2012-07-02 16:00,2012-07-01 08:00,2012-07-02 16:00,,2013-04-16 08:00,2013-04-17 16:00,,PT_Normal,,,,,LIGmFva07UyYMHDasHF3VQ,AvajsHLxjEGyyQn6kYuXCQ,,,N,0,0,,,2012-06-19 11:46,2012-06-20 09:59,admin,admin
369,144377,5115,22806,6085,1,100,N,N,N,CP_Drtn,TT_LOE,DT_FixedDUR2,RV_OK,TK_Complete,A1260,T.E.R for field Instrument,,,,0,0,0,0,80,0,0,0,,2012-01-17 08:00,2012-05-02 16:00,,,,,,,,2012-01-17 08:00,2012-01-31 16:00,,,,,PT_Normal,,,,,fPhAVREI6kmQeeiXxy0x3w,ct7xw1S//EaYd5hkrUDieg,,,N,0,0,,,2012-06-19 11:46,2012-06-19 11:46,admin,admin
370,144378,5115,22806,6085,1,0,N,N,N,CP_Drtn,TT_LOE,DT_FixedDUR2,RV_OK,TK_NotStart,A1500,MRP for field Instrument,,1576,0,40,0,0,0,40,0,0,0,,,,2013-04-09 08:00,2013-04-15 16:00,,2012-06-24 08:00,2012-06-28 16:00,2012-06-24 08:00,2012-06-28 16:00,2012-06-24 08:00,2012-06-28 16:00,,2013-04-09 08:00,2013-04-15 16:00,,PT_Normal,,,,,SotbW5jWmEibYdiDz3rcGQ,dTXvLV4G8EqSCMWO1CBnLA,,,N,0,0,,,2012-06-19 11:46,2012-06-20 10:09,admin,admin
371,144379,5115,22806,6086,1,0,N,N,N,CP_Drtn,TT_Task,DT_FixedDUR2,RV_OK,TK_NotStart,4229PFI90,Fabrication upto R.F.S,,2216,0,960,0,0,0,960,0,0,0,,,,2013-04-25 08:00,2013-08-22 16:00,,2012-07-10 08:00,2012-11-18 16:00,2012-07-10 08:00,2012-11-18 16:00,2012-07-10 08:00,2012-11-18 16:00,,2013-04-25 08:00,2013-08-22 16:00,,PT_Normal,,,,,eDc9jkNwdE6Ps3rooURPag,7UQ9XmTabEqxyA7/76n9MA,,,N,0,0,,,2012-06-19 11:46,2012-06-20 09:59,admin,admin
372,144380,5115,22806,6087,1,0,N,N,N,CP_Drtn,TT_Task,DT_FixedDUR2,RV_OK,TK_NotStart,4229PFI100,Delivery upto site,,2232,208,280,0,0,0,280,0,0,0,,,,2013-08-23 08:00,2013-09-26 16:00,,2012-11-19 08:00,2012-12-23 16:00,2012-11-19 08:00,2012-12-23 16:00,2012-11-19 08:00,2012-12-23 16:00,,2013-08-23 08:00,2013-09-26 16:00,,PT_Normal,,,,,v0yYgI4r9UOEll+aX7uHmQ,Ed1rw6pVGkqfXjRfFT7JpQ,,,N,0,0,,,2012-06-19 11:46,2012-06-20 09:59,admin,admin
373,144381,5115,22806,6085,1,0,N,N,N,CP_Drtn,TT_Task,DT_FixedDUR2,RV_OK,TK_Active,4229PFI30,Receive revised commercial offers,,1576,0,0,0,0,0,40,0,0,0,,2012-05-03 00:00,,2013-03-18 16:00,2013-03-18 16:00,2012-05-10 16:00,2012-06-03 08:00,2012-06-03 08:00,2012-06-03 08:00,2012-06-03 08:00,2012-04-29 08:00,2012-05-03 16:00,,2013-03-18 16:00,2013-03-18 16:00,,PT_Normal,,,,,61PGQn0ixki/v8V/HJv1ag,AYPNiDXaKE6RLh7mqlxUcQ,,,N,0,0,,,2012-06-19 11:46,2012-06-20 09:59,admin,admin
374,144382,5115,22806,6085,1,0,N,N,N,CP_Drtn,TT_Task,DT_FixedDUR2,RV_OK,TK_NotStart,4229PFI50,Client approval on bid committee reccomendation,,1576,0,16,0,0,0,16,0,0,0,,,,2013-04-02 08:00,2013-04-03 16:00,,2012-06-17 08:00,2012-06-18 16:00,2012-06-17 08:00,2012-06-18 16:00,2012-06-17 08:00,2012-06-18 16:00,,2013-04-02 08:00,2013-04-03 16:00,,PT_Normal,,,,,ya+6FBwjdE6NuTrGZw4mFA,okMlSxQPlUu8ymqN/KtiYQ,,,N,0,0,,,2012-06-19 11:46,2012-06-20 09:59,admin,admin
375,144383,5115,22806,6085,1,0,N,N,N,CP_Drtn,TT_Task,DT_FixedDUR2,RV_OK,TK_NotStart,4229PFI80,L.C issued by Gupco,,1576,0,40,0,0,0,40,0,0,0,,,,2013-04-18 08:00,2013-04-24 16:00,,2012-07-03 08:00,2012-07-09 16:00,2012-07-03 08:00,2012-07-09 16:00,2012-07-03 08:00,2012-07-09 16:00,,2013-04-18 08:00,2013-04-24 16:00,,PT_Normal,,,,,ogum0m/TPUGNBZhyUl7kBw,8XeEO//CcEKYVr5WUWm1nw,,,N,0,0,,,2012-06-19 11:46,2012-06-20 09:59,admin,admin
376,144384,5115,22806,6085,1,100,N,N,N,CP_Drtn,TT_Task,DT_FixedDUR2,RV_OK,TK_Complete,4229PFI10,Issue RFQ for Field Instrument,,,,0,0,0,0,8,0,0,0,,2011-12-13 00:00,2011-12-14 00:00,2013-03-18 16:00,2013-03-18 16:00,,2012-06-02 00:00,2012-06-02 00:00,,,2012-01-01 08:00,2012-01-01 16:00,,,,,PT_Normal,,,,,kPmCIGCAQk6mWzD6a/knMw,PapX/E/5VEedYgMn9pW1WA,,,N,0,0,,,2012-06-19 11:46,2012-06-20 10:09,admin,admin
377,144385,5115,22806,6086,1,100,N,N,N,CP_Drtn,TT_Task,DT_FixedDUR2,RV_OK,TK_Complete,4229PFI20,Bidding for field Instrument,,,,0,0,0,0,168,0,0,0,,2011-12-15 00:00,2012-01-12 16:00,2013-03-18 16:00,2013-03-18 16:00,,2012-06-02 00:00,2012-06-02 00:00,,,2011-12-31 08:00,2012-01-28 16:00,,,,,PT_Normal,,,,,ob/u0xtLrk6zt9jDkbkpiQ,WAPraHdgpEiuGrgnPTRw+A,,,N,0,0,,,2012-06-19 11:46,2012-06-20 10:09,admin,admin
378,144386,5115,22806,6085,1,0,N,N,N,CP_Drtn,TT_Task,DT_FixedDUR2,RV_OK,TK_NotStart,4229PFI40,commercial evaluation & bid committee for field Instrument,,1576,0,80,0,0,0,80,0,0,0,,,,2013-03-19 08:00,2013-04-01 16:00,,2012-06-03 08:00,2012-06-14 16:00,2012-06-03 08:00,2012-06-14 16:00,2012-06-03 08:00,2012-06-14 16:00,,2013-03-19 08:00,2013-04-01 16:00,,PT_Normal,,,,,wc0Fz2iWUk+atgTDWPhKZw,e/V43NRVMUS133iTAw1J2Q,,,N,0,0,,,2012-06-19 11:46,2012-06-20 09:59,admin,admin
379,144387,5115,22807,6086,1,0,N,N,N,CP_Drtn,TT_Task,DT_FixedDUR2,RV_OK,TK_NotStart,4229PCV90,Fabrication upto R.F.S,,2392,0,696,0,0,0,696,0,0,0,,,,2013-04-26 08:00,2013-07-21 16:00,2012-09-25 16:00,2012-06-19 08:00,2012-09-25 16:00,2012-06-19 08:00,2012-09-25 16:00,2012-06-19 08:00,2012-09-25 16:00,,2013-04-26 08:00,2013-07-21 16:00,,PT_Normal,,,,,w3IIlPpnKEmVbyMvEoObwQ,7UQ9XmTabEqxyA7/76n9MA,,,N,0,0,,,2012-06-19 11:46,2012-06-20 09:59,admin,admin
380,144388,5115,22807,6087,1,0,N,N,N,CP_Drtn,TT_Task,DT_FixedDUR2,RV_OK,TK_NotStart,4229PCV100,Delivery upto site,,2664,1072,280,0,0,0,280,0,0,0,,,,2013-08-23 08:00,2013-09-26 16:00,,2012-09-26 08:00,2012-10-30 16:00,2012-09-26 08:00,2012-10-30 16:00,2012-09-26 08:00,2012-10-30 16:00,,2013-08-23 08:00,2013-09-26 16:00,,PT_Normal,,,,,W701JisHA0yL/S/DfkfeVA,Ed1rw6pVGkqfXjRfFT7JpQ,,,N,0,0,,,2012-06-19 11:46,2012-06-20 09:59,admin,admin
381,144389,5115,22807,6085,1,100,N,N,N,CP_Drtn,TT_Task,DT_FixedDUR2,RV_OK,TK_Complete,4229PCV30,Receive revised commercial offers,,,,0,0,0,0,40,0,0,0,,2012-04-10 00:00,2012-04-26 00:00,2013-01-20 16:00,2013-01-20 16:00,,2012-06-02 00:00,2012-06-02 00:00,,,2012-04-01 08:00,2012-04-05 16:00,,,,,PT_Normal,,,,,R/YFvzMYYk6CVeEuF8crQg,AYPNiDXaKE6RLh7mqlxUcQ,,,N,0,0,,,2012-06-19 11:46,2012-06-20 10:09,admin,admin
382,144390,5115,22807,6085,1,100,N,N,N,CP_Drtn,TT_Task,DT_FixedDUR2,RV_OK,TK_Complete,4229PCV50,Client approval on bid committee reccomendation,,,,0,0,0,0,16,0,0,0,,2012-05-13 08:00,2012-05-17 00:00,2013-01-20 16:00,2013-01-20 16:00,,2012-06-02 00:00,2012-06-02 00:00,,,2012-05-13 08:00,2012-05-14 16:00,,,,,PT_Normal,,,,,C8YRoJDql0uRDcij/YZcPw,okMlSxQPlUu8ymqN/KtiYQ,,,N,0,0,,,2012-06-19 11:46,2012-06-20 10:09,admin,admin
383,144391,5115,22807,6085,1,0,N,N,N,CP_Drtn,TT_Task,DT_FixedDUR2,RV_OK,TK_NotStart,4229PCV80,L.C issued by Gupco,,1704,0,40,0,0,0,40,0,0,0,,,,2013-04-21 08:00,2013-04-25 16:00,,2012-06-12 08:00,2012-06-18 16:00,2012-06-12 08:00,2012-06-18 16:00,2012-06-12 08:00,2012-06-18 16:00,,2013-04-21 08:00,2013-04-25 16:00,,PT_Normal,,,,,obyi3dYFhEWcmaqVSg1oqw,8XeEO//CcEKYVr5WUWm1nw,,,N,0,0,,,2012-06-19 11:46,2012-06-20 09:59,admin,admin
384,144392,5115,22807,6085,1,100,N,N,N,CP_Drtn,TT_Task,DT_FixedDUR2,RV_OK,TK_Complete,4229PCV10,Issue RFQ for Choke valves,,,,0,0,0,0,16,0,0,0,,2011-11-24 00:00,2011-11-24 00:00,2013-01-20 16:00,2013-01-20 16:00,,2012-06-02 00:00,2012-06-02 00:00,,,2011-12-04 08:00,2011-12-05 16:00,,,,,PT_Normal,,,,,N5i3hGkRoEumBK/f36DO9g,PapX/E/5VEedYgMn9pW1WA,,,N,0,0,,,2012-06-19 11:46,2012-06-20 10:09,admin,admin
385,144393,5115,22807,6086,1,100,N,N,N,CP_Drtn,TT_Task,DT_FixedDUR2,RV_OK,TK_Complete,4229PCV20,Bidding for Choke valves,,,,0,0,0,0,240,0,0,0,,2011-11-25 00:00,2011-12-26 00:00,2013-01-20 16:00,2013-01-20 16:00,,2012-06-02 00:00,2012-06-02 00:00,,,2011-12-06 08:00,2012-01-16 16:00,,,,,PT_Normal,,,,,jgp2/yelHUCBw9yjpag9fg,WAPraHdgpEiuGrgnPTRw+A,,,N,0,0,,,2012-06-19 11:46,2012-06-20 10:09,admin,admin
386,144394,5115,22807,6085,1,100,N,N,N,CP_Drtn,TT_Task,DT_FixedDUR2,RV_OK,TK_Complete,4229PCV40,commercial evaluation & bid committee for Choke valves,,,,0,0,0,0,80,0,0,0,,2012-04-29 08:00,2012-05-13 16:00,2013-01-20 16:00,2013-01-20 16:00,,2012-06-02 00:00,2012-06-02 00:00,,,2012-04-29 08:00,2012-05-10 16:00,,,,,PT_Normal,,,,,0BtwIOiBCUK1G5T7BNghoA,e/V43NRVMUS133iTAw1J2Q,,,N,0,0,,,2012-06-19 11:46,2012-06-20 10:09,admin,admin
387,144395,5115,22807,6085,1,0,N,N,N,CP_Drtn,TT_Task,DT_FixedDUR2,RV_OK,TK_Active,4229PCV60,F.O.C for Choke valves,,1248,0,0,0,0,0,24,0,0,0,,2012-05-17 00:00,,2013-01-20 16:00,2013-01-20 16:00,2012-05-31 16:00,2012-06-03 08:00,2012-06-03 08:00,2012-06-03 08:00,2012-06-03 08:00,2012-04-29 08:00,2012-05-01 16:00,,2013-01-20 16:00,2013-01-20 16:00,,PT_Normal,,,,,Mk7yizAQsEaZALcX6gHGfw,4AXOah8HAEeGpjijEBPUrg,,,N,0,0,,,2012-06-19 11:46,2012-06-20 09:59,admin,admin
388,144396,5115,22807,6085,1,0,N,N,N,CP_Drtn,TT_Task,DT_FixedDUR2,RV_OK,TK_NotStart,4229PCV70,P.O for Choke valves,,1704,0,40,0,0,0,40,0,0,0,,,,2013-04-14 08:00,2013-04-18 16:00,,2012-06-05 08:00,2012-06-11 16:00,2012-06-05 08:00,2012-06-11 16:00,2012-06-05 08:00,2012-06-11 16:00,,2013-04-14 08:00,2013-04-18 16:00,,PT_Normal,,,,,CblLiBvQRkyc8uNMykYqlg,AvajsHLxjEGyyQn6kYuXCQ,,,N,0,0,,,2012-06-19 11:46,2012-06-20 09:59,admin,admin
389,144397,5115,22807,6085,1,100,N,N,N,CP_Drtn,TT_LOE,DT_FixedDUR2,RV_OK,TK_Complete,A1280,T.E.R for choke valves,,,,0,0,0,0,160,0,0,0,,2011-12-27 00:00,2012-04-02 00:00,,,,,,,,2012-01-01 08:00,2012-01-29 16:00,,,,,PT_Normal,,,,,VQYshSxrxk++YHa8o9ENaA,iXh9gte5aEazCHzhI0fQ8w,,,N,0,0,,,2012-06-19 11:46,2012-06-19 11:46,admin,admin
390,144398,5115,22807,6085,1,0,N,N,N,CP_Drtn,TT_LOE,DT_FixedDUR2,RV_OK,TK_Active,A1480,MRP for Choke valves,,1704,0,16,0,0,0,40,0,0,0,,2012-05-27 00:00,,2012-05-27 08:00,2013-04-11 16:00,,2012-06-03 08:00,2012-06-04 16:00,2012-06-03 08:00,2012-06-04 16:00,2012-06-03 08:00,2012-06-07 16:00,,2012-05-27 08:00,2013-04-11 16:00,,PT_Normal,,,,,akYu6iCvOUGMmC3b8Ydf0A,NjzlulhbIUKcB6s3mpdNUA,,,N,0,0,,,2012-06-19 11:46,2012-06-20 10:09,admin,admin
391,144399,5115,22808,6086,1,0,N,N,N,CP_Drtn,TT_Task,DT_FixedDUR2,RV_OK,TK_NotStart,4229PRV90,Fabrication upto R.F.S,,1720,0,1224,0,0,0,1224,0,0,0,,,,2013-01-21 08:00,2013-06-22 16:00,2012-11-19 16:00,2012-06-08 08:00,2012-11-19 16:00,2012-06-08 08:00,2012-11-19 16:00,2012-06-08 08:00,2012-11-19 16:00,,2013-01-21 08:00,2013-06-22 16:00,,PT_Normal,,,,,DdeH0coupUCtP8XMxkiMiA,7UQ9XmTabEqxyA7/76n9MA,,,N,0,0,,,2012-06-19 11:46,2012-06-20 09:59,admin,admin
392,144400,5115,22808,6087,1,0,N,N,N,CP_Drtn,TT_Task,DT_FixedDUR2,RV_OK,TK_NotStart,4229PRV100,Delivery upto site,,2264,240,240,0,0,0,240,0,0,0,,,,2013-08-28 08:00,2013-09-26 16:00,,2012-11-20 08:00,2012-12-19 16:00,2012-11-20 08:00,2012-12-19 16:00,2012-11-20 08:00,2012-12-19 16:00,,2013-08-28 08:00,2013-09-26 16:00,,PT_Normal,,,,,fpVy32jdzU+We+J6bXJ+OA,Ed1rw6pVGkqfXjRfFT7JpQ,,,N,0,0,,,2012-06-19 11:46,2012-06-20 09:59,admin,admin
393,144401,5115,22808,6085,1,100,N,N,N,CP_Drtn,TT_Task,DT_FixedDUR2,RV_OK,TK_Complete,4229PRV30,Receive revised commercial offers,,,,0,0,0,0,40,0,0,0,,2012-04-04 00:00,2012-04-15 00:00,2013-01-13 16:00,2013-01-13 16:00,,2012-06-02 00:00,2012-06-02 00:00,,,2012-04-01 08:00,2012-04-05 16:00,,,,,PT_Normal,,,,,LEBOmigTwEKVu5KVS0F1zA,AYPNiDXaKE6RLh7mqlxUcQ,,,N,0,0,,,2012-06-19 11:46,2012-06-20 10:09,admin,admin
394,144402,5115,22808,6085,1,100,N,N,N,CP_Drtn,TT_Task,DT_FixedDUR2,RV_OK,TK_Complete,4229PRV50,Client approval on bid committee reccommendation,,,,0,0,0,0,16,0,0,0,,2012-05-13 08:00,2012-05-14 16:00,2013-01-13 16:00,2013-01-13 16:00,,2012-06-02 00:00,2012-06-02 00:00,,,2012-05-13 08:00,2012-05-14 16:00,,,,,PT_Normal,,,,,Dd02/5VRm0GcF/e0CFm9Aw,okMlSxQPlUu8ymqN/KtiYQ,,,N,0,0,,,2012-06-19 11:46,2012-06-20 10:09,admin,admin
395,144403,5115,22808,6085,1,0,N,N,N,CP_Drtn,TT_Task,DT_FixedDUR2,RV_OK,TK_NotStart,4229PRV80,L.C issued by Gupco,,2616,2616,24,0,0,0,24,0,0,0,,,,2013-09-24 08:00,2013-09-26 16:00,,2012-06-10 08:00,2012-06-12 16:00,2012-06-10 08:00,2012-06-12 16:00,2012-06-10 08:00,2012-06-12 16:00,,2013-09-24 08:00,2013-09-26 16:00,,PT_Normal,,,,,HoblfJyp0E6qZHVpEYKwkw,8XeEO//CcEKYVr5WUWm1nw,,,N,0,0,,,2012-06-19 11:46,2012-06-20 09:59,admin,admin
396,144404,5115,22808,6085,1,100,N,N,N,CP_Drtn,TT_Task,DT_FixedDUR2,RV_OK,TK_Complete,4229PRV10,Issue RFQ for pressure regulator valves,,,,0,0,0,0,16,0,0,0,,2011-10-06 00:00,2011-10-09 00:00,2013-01-13 16:00,2013-01-13 16:00,,2012-06-02 00:00,2012-06-02 00:00,,,2011-10-09 08:48,2011-10-11 08:48,,,,,PT_Normal,,,,,MtKa/12vUEiCpe4mSijhXQ,PapX/E/5VEedYgMn9pW1WA,,,N,0,0,,,2012-06-19 11:46,2012-06-20 10:09,admin,admin
397,144405,5115,22808,6086,1,100,N,N,N,CP_Drtn,TT_Task,DT_FixedDUR2,RV_OK,TK_Complete,4229PRV20,Bidding for pressure regulator valves,,,,0,0,0,0,248,0,0,0,,2011-10-10 00:00,2012-02-01 00:00,2013-01-13 16:00,2013-01-13 16:00,,2012-06-02 00:00,2012-06-02 00:00,,,2011-10-11 08:48,2011-11-11 08:48,,,,,PT_Normal,,,,,CFIRwxNC20+yhHZrdm830Q,WAPraHdgpEiuGrgnPTRw+A,,,N,0,0,,,2012-06-19 11:46,2012-06-20 10:09,admin,admin
398,144406,5115,22808,6085,1,100,N,N,N,CP_Drtn,TT_Task,DT_FixedDUR2,RV_OK,TK_Complete,4229PRV40,Commercial evaluation & bid committee for pressure regulator valves,,,,0,0,0,0,80,0,0,0,,2012-04-17 00:00,2012-05-10 16:00,2013-01-13 16:00,2013-01-13 16:00,,2012-06-02 00:00,2012-06-02 00:00,,,2012-04-29 08:00,2012-05-10 16:00,,,,,PT_Normal,,,,,eRNt4PAp1Emc48fvarvuNA,e/V43NRVMUS133iTAw1J2Q,,,N,0,0,,,2012-06-19 11:46,2012-06-20 10:09,admin,admin
399,144407,5115,22808,6085,1,0,N,N,N,CP_Drtn,TT_Task,DT_FixedDUR2,RV_OK,TK_Active,4229PRV60,F.O.C for pressure regulator valves,,1208,0,0,0,0,0,16,0,0,0,,2012-05-15 08:00,,2013-01-13 16:00,2013-01-13 16:00,2012-05-31 16:00,2012-06-03 08:00,2012-06-03 08:00,2012-06-03 08:00,2012-06-03 08:00,2012-05-15 08:00,2012-05-16 16:00,,2013-01-13 16:00,2013-01-13 16:00,,PT_Normal,,,,,vwTcDGo+akyhxrxEDJS3HA,4AXOah8HAEeGpjijEBPUrg,,,N,0,0,,,2012-06-19 11:46,2012-06-20 09:59,admin,admin
400,144408,5115,22808,6085,1,0,N,N,N,CP_Drtn,TT_Task,DT_FixedDUR2,RV_OK,TK_NotStart,4229PRV70,P.O for pressure regulator valves,,1208,0,16,0,0,0,16,0,0,0,,,,2013-01-17 08:00,2013-01-20 16:00,,2012-06-06 08:00,2012-06-07 16:00,2012-06-06 08:00,2012-06-07 16:00,2012-06-06 08:00,2012-06-07 16:00,,2013-01-17 08:00,2013-01-20 16:00,,PT_Normal,,,,,ShnrjdRIuEKplLbG3UL6+Q,AvajsHLxjEGyyQn6kYuXCQ,,,N,0,0,,,2012-06-19 11:46,2012-06-20 09:59,admin,admin
401,144409,5115,22808,6085,1,100,N,N,N,CP_Drtn,TT_LOE,DT_FixedDUR2,RV_OK,TK_Complete,A1290,T.E.R for  Pressure regulator valves,,,,0,0,0,0,120,0,0,0,,2012-02-02 00:00,2012-04-03 00:00,,,,,,,,2012-03-08 08:00,2012-03-28 16:00,,,,,PT_Normal,,,,,FU8Cjdo+DEib8hyNxIcwAQ,N0GerPhz6kKoKX7oZlOJsw,,,N,0,0,,,2012-06-19 11:46,2012-06-19 11:46,admin,admin
402,144410,5115,22808,6085,1,0,N,N,N,CP_Drtn,TT_LOE,DT_FixedDUR2,RV_OK,TK_Active,A1470,MRP for  pressure regulator valves,,1208,0,24,0,0,0,40,0,0,0,,2012-05-27 00:00,,2012-05-27 08:00,2013-01-16 16:00,,2012-06-03 08:00,2012-06-05 16:00,2012-06-03 08:00,2012-06-05 16:00,2012-06-03 08:00,2012-06-07 16:00,,2012-05-27 08:00,2013-01-16 16:00,,PT_Normal,,,,,m/27l7omdUq2MhDIBOdKZw,AwbIFp5LAk2PiImMFdUHFg,,,N,0,0,,,2012-06-19 11:46,2012-06-20 10:09,admin,admin
403,144411,5115,22809,6085,1,100,N,N,N,CP_Drtn,TT_Task,DT_FixedDUR2,RV_OK,TK_Complete,4229PCI30,Receive revised commercial offers,,,,0,0,0,0,40,0,0,0,,2012-02-05 00:00,2012-02-27 00:00,2012-12-24 08:00,2012-12-24 08:00,,2012-06-02 00:00,2012-06-02 00:00,,,2012-03-25 08:00,2012-03-29 16:00,,,,,PT_Normal,,,,,OXmI6WEp/EiSSCBUdwfVew,,,,N,0,0,,,2012-06-19 11:46,2012-06-20 10:09,admin,admin
404,144412,5115,22809,6085,1,100,N,N,N,CP_Drtn,TT_Task,DT_FixedDUR2,RV_OK,TK_Complete,4229PCI50,Client approval on bid committee reccomendation,,,,0,0,0,0,16,0,0,0,,2012-03-13 08:00,2012-03-18 00:00,2012-12-24 08:00,2012-12-24 08:00,,2012-06-02 00:00,2012-06-02 00:00,,,2012-03-13 08:00,2012-03-14 16:00,,,,,PT_Normal,,,,,hNe6c5gvgkSTkRbqTgng9Q,,,,N,0,0,,,2012-06-19 11:46,2012-06-20 10:09,admin,admin
405,144413,5115,22809,6085,1,0,N,N,N,CP_Drtn,TT_Task,DT_FixedDUR2,RV_OK,TK_NotStart,4229PCI80,L.C issued by Gupco,,1088,0,40,0,0,0,40,0,0,0,,,,2012-12-24 08:00,2012-12-30 16:00,,2012-06-03 08:00,2012-06-07 16:00,2012-06-03 08:00,2012-06-07 16:00,2012-06-03 08:00,2012-06-07 16:00,,2012-12-24 08:00,2012-12-30 16:00,,PT_Normal,,,,,tL9vvTgAjEe8+fm0l06LmA,,,,N,0,0,,,2012-06-19 11:46,2012-06-20 09:59,admin,admin
406,144414,5115,22809,6086,1,0,N,N,N,CP_Drtn,TT_Task,DT_FixedDUR2,RV_OK,TK_Active,4229PCI90,Fabrication upto R.F.S,,1552,0,480,0,0,0,1120,0,0,0,,2012-03-21 00:00,,2012-12-31 08:00,2013-02-28 16:00,2012-08-06 16:00,2012-06-08 08:00,2012-08-06 16:00,2012-06-08 08:00,2012-08-06 16:00,2012-04-06 08:00,2012-09-04 16:00,,2012-12-31 08:00,2013-02-28 16:00,,PT_Normal,,,,,Oi527I0fb0idacqVB9mEGA,,,,N,0,0,,,2012-06-19 11:46,2012-06-20 09:59,admin,admin
407,144415,5115,22809,6087,1,0,N,N,N,CP_Drtn,TT_Task,DT_FixedDUR2,RV_OK,TK_NotStart,4229PCI100,Delivery upto site,,2984,1392,360,0,0,0,360,0,0,0,,,,2013-08-13 08:00,2013-09-26 16:00,,2012-08-07 08:00,2012-09-20 16:00,2012-08-07 08:00,2012-09-20 16:00,2012-08-07 08:00,2012-09-20 16:00,,2013-08-13 08:00,2013-09-26 16:00,,PT_Normal,,,,,iDz6dUDiFUuC4O6Ab5D5aw,,,,N,0,0,,,2012-06-19 11:46,2012-06-20 09:59,admin,admin
408,144416,5115,22809,6085,1,100,N,N,N,CP_Drtn,TT_Task,DT_FixedDUR2,RV_OK,TK_Complete,4229PCI10,Issue RFQ for Chemical injection Pkg.,,,,0,0,0,0,16,0,0,0,,2011-08-24 08:00,2011-08-25 16:00,2012-12-24 08:00,2012-12-24 08:00,,2012-06-02 00:00,2012-06-02 00:00,,,2011-08-24 08:00,2011-08-25 16:00,,,,,PT_Normal,,,,,SG1XkDQ/Kk6tKi/spPkDeg,,,,N,0,0,,,2012-06-19 11:46,2012-06-20 10:09,admin,admin
409,144417,5115,22809,6086,1,100,N,N,N,CP_Drtn,TT_Task,DT_FixedDUR2,RV_OK,TK_Complete,4229PCI20,Bidding for Chemical injection Pkg.,,,,0,0,0,0,192,0,0,0,,2011-08-26 08:00,2011-09-19 00:00,2012-12-24 08:00,2012-12-24 08:00,,2012-06-02 00:00,2012-06-02 00:00,,,2011-08-26 08:00,2011-09-18 16:00,,,,,PT_Normal,,,,,qcNeeMzE/0e7gkueg91OAw,,,,N,0,0,,,2012-06-19 11:46,2012-06-20 10:09,admin,admin
410,144418,5115,22809,6085,1,100,N,N,N,CP_Drtn,TT_Task,DT_FixedDUR2,RV_OK,TK_Complete,4229PCI40,Commercial evaluation & bid committee for Chemical injection Pkg.,,,,0,0,0,0,80,0,0,0,,2012-02-28 00:00,2012-03-06 16:00,2012-12-24 08:00,2012-12-24 08:00,,2012-06-02 00:00,2012-06-02 00:00,,,2012-03-04 08:00,2012-03-15 16:00,,,,,PT_Normal,,,,,I6ql68SZMkSE8nz08ZmtAQ,,,,N,0,0,,,2012-06-19 11:46,2012-06-20 10:09,admin,admin
411,144419,5115,22809,6085,1,100,N,N,N,CP_Drtn,TT_Task,DT_FixedDUR2,RV_OK,TK_Complete,4229PCI60,F.O.C for Chemical injection Pkg.,,,,0,0,0,0,24,0,0,0,,2012-03-07 00:00,2012-03-20 00:00,2012-12-24 08:00,2012-12-24 08:00,,2012-06-02 00:00,2012-06-02 00:00,,,2012-04-01 08:00,2012-04-03 16:00,,,,,PT_Normal,,,,,WAfhhxlASUuPU49GKoV0lg,,,,N,0,0,,,2012-06-19 11:46,2012-06-20 10:09,admin,admin
412,144420,5115,22809,6085,1,100,N,N,N,CP_Drtn,TT_Task,DT_FixedDUR2,RV_OK,TK_Complete,4229PCI70,P.O for Chemical injection Pkg.,,,,0,0,0,0,40,0,0,0,,2012-04-08 00:00,2012-04-08 00:00,2012-12-24 08:00,2012-12-24 08:00,,2012-06-02 00:00,2012-06-02 00:00,,,2012-04-01 08:00,2012-04-05 16:00,,,,,PT_Normal,,,,,VkEQG6i0yU2U8qO834b/NA,,,,N,0,0,,,2012-06-19 11:46,2012-06-20 10:09,admin,admin
413,144421,5115,22809,6085,1,100,N,N,N,CP_Drtn,TT_LOE,DT_FixedDrtn,RV_OK,TK_Complete,A1030,T.E.R for Chemical injection,,,,0,0,0,0,160,0,0,0,,2011-09-19 08:00,2011-11-24 00:00,,,,,,,,2011-09-19 08:00,2011-10-17 16:00,,,,,PT_Normal,,,,,tiGv2H5rXE66GUJcSuxiHg,UynpZlC0SEW7UHo8eeimsg,,,N,0,0,,,2012-06-19 11:46,2012-06-19 11:46,admin,admin
414,144422,5115,22809,6085,1,100,N,N,N,CP_Drtn,TT_LOE,DT_FixedDUR2,RV_OK,TK_Complete,A1310,MRP for Chemical injection,,,,0,0,0,0,24,0,0,0,,2012-03-25 00:00,2012-04-05 00:00,,,,,,,,2012-03-25 08:00,2012-03-27 16:00,,,,,PT_Normal,,,,,OQgU8oJe7k2DK3x2v1SJBA,R1Sdma6vEUKAbOUepMCX5Q,,,N,0,0,,,2012-06-19 11:46,2012-06-19 11:46,admin,admin
415,144423,5115,22775,6085,1,100,N,N,N,CP_Drtn,TT_Task,DT_FixedDUR2,RV_OK,TK_Complete,4229GM70,P/L Installation package- Approval,,,,0,0,0,0,200,0,0,0,,2011-09-28 08:00,2011-11-02 16:00,2013-09-26 16:00,2013-09-26 16:00,,2012-06-02 00:00,2012-06-02 00:00,,,2011-09-28 08:00,2011-11-02 16:00,,,,,PT_Normal,,,,,XxYJJRMl+UKQnw5+5krf1Q,,,,N,0,0,,,2012-06-19 11:46,2012-06-20 10:09,admin,admin
416,144424,5115,22775,6085,1,100,N,N,N,CP_Drtn,TT_Task,DT_FixedDUR2,RV_OK,TK_Complete,4229GM90,P/L  Installation package- Final,,,,0,0,0,0,160,0,0,0,,2011-11-24 08:00,2011-11-29 00:00,2013-09-26 16:00,2013-09-26 16:00,,2012-06-02 00:00,2012-06-02 00:00,,,2011-11-24 08:00,2011-12-21 16:00,,,,,PT_Normal,,,,,ik7WkqZ2I0qN8DaXPOS4Zw,,,,N,0,0,,,2012-06-19 11:46,2012-06-20 10:09,admin,admin
417,144425,5115,22775,6085,1,100,N,N,N,CP_Drtn,TT_Task,DT_FixedDUR2,RV_OK,TK_Complete,4229GM40,Final Project Design basis,,,,0,0,0,0,80,0,0,0,,2011-11-14 08:00,2011-11-27 16:00,2013-09-26 16:00,2013-09-26 16:00,,2012-06-02 00:00,2012-06-02 00:00,,,2011-11-14 08:00,2011-11-27 16:00,,,,,PT_Normal,,,,,+iFutCd/SEOX9IPGajOcUA,,,,N,0,0,,,2012-06-19 11:46,2012-06-20 10:09,admin,admin
418,144426,5115,22775,6085,1,100,N,N,N,CP_Drtn,TT_Task,DT_FixedDUR2,RV_OK,TK_Complete,4229GM50,Platform Installation package- Approval,,,,0,0,0,0,160,0,0,0,,2011-08-15 00:00,2011-10-23 00:00,2013-09-26 16:00,2013-09-26 16:00,,2012-06-02 00:00,2012-06-02 00:00,,,2011-10-17 08:00,2011-11-20 16:00,,,,,PT_Normal,,,,,Ock00a0mEkCaerO1dD3dgA,,,,N,0,0,,,2012-06-19 11:46,2012-06-20 10:09,admin,admin
419,144427,5115,22775,6085,1,100,N,N,N,CP_Drtn,TT_Task,DT_FixedDUR2,RV_OK,TK_Complete,4229GM80,Platform Installation package- Final,,,,0,0,0,0,160,0,0,0,,2011-10-23 00:00,2011-10-24 00:00,2013-09-26 16:00,2013-09-26 16:00,,2012-06-02 00:00,2012-06-02 00:00,,,2011-11-13 08:00,2011-12-08 16:00,,,,,PT_Normal,,,,,SmHMemz9ZUesHhfW6UnxnA,,,,N,0,0,,,2012-06-19 11:46,2012-06-20 10:09,admin,admin
420,144428,5115,22775,6085,1,0,N,N,N,CP_Drtn,TT_Task,DT_FixedDUR2,RV_OK,TK_NotStart,4229GM130,Internal Design Review meeting,,2664,1368,16,0,0,0,16,0,0,0,,,,2013-09-25 08:00,2013-09-26 16:00,,2012-06-03 08:00,2012-06-04 16:00,2012-06-03 08:00,2012-06-04 16:00,2012-06-03 08:00,2012-06-04 16:00,,2013-09-25 08:00,2013-09-26 16:00,,PT_Normal,,,,,Y2BGRINsF0ChEjuGYV6z2w,,,,N,0,0,,,2012-06-19 11:46,2012-06-20 09:59,admin,admin
421,144429,5115,22775,6085,1,100,N,N,N,CP_Drtn,TT_Task,DT_FixedDUR2,RV_OK,TK_Complete,4229GM20,Project Design basis IFA,,,,0,0,0,0,80,0,0,0,,2011-09-29 08:00,2011-10-23 16:00,2013-09-26 16:00,2013-09-26 16:00,,2012-06-02 00:00,2012-06-02 00:00,,,2011-09-29 08:00,2011-10-13 16:00,,,,,PT_Normal,,,,,0kkLECz2O0WyuBKAQPjK6A,q7j6wPJqRLqWzOiikNoPRg,,,N,0,0,,,2012-06-19 11:46,2012-06-20 10:09,admin,admin
422,144430,5115,22775,6085,1,100,N,N,N,CP_Drtn,TT_Task,DT_FixedDUR2,RV_OK,TK_Complete,4229GM30,Platform fabrication package- Approval,,,,0,0,0,0,336,0,0,0,,2011-08-15 08:00,2011-10-23 00:00,2013-09-26 16:00,2013-09-26 16:00,,2012-06-02 00:00,2012-06-02 00:00,,,2011-08-15 08:00,2011-10-16 16:00,,,,,PT_Normal,,,,,gGIR2ZUwh06sjDXfOokdSg,,,,N,0,0,,,2012-06-19 11:46,2012-06-20 10:09,admin,admin
423,144431,5115,22775,6085,1,100,N,N,N,CP_Drtn,TT_Task,DT_FixedDUR2,RV_OK,TK_Complete,4229GM60,Platform fabrication  package- Final,,,,0,0,0,0,120,0,0,0,,2011-10-23 08:00,2011-10-24 00:00,2013-09-26 16:00,2013-09-26 16:00,,2012-06-02 00:00,2012-06-02 00:00,,,2011-10-23 08:00,2011-11-17 16:00,,,,,PT_Normal,,,,,GVRwr2FGEUOS1Hm9RdnsnA,,,,N,0,0,,,2012-06-19 11:46,2012-06-20 10:09,admin,admin
424,144432,5115,22775,6085,1,100,N,N,N,CP_Drtn,TT_Task,DT_FixedDUR2,RV_OK,TK_Complete,4229GM150,Project quality assurance plan,,,,0,0,0,0,160,0,0,0,,2011-10-17 00:00,2011-11-13 00:00,2013-09-26 16:00,2013-09-26 16:00,,2012-06-02 00:00,2012-06-02 00:00,,,2011-10-30 08:00,2011-12-01 16:00,,,,,PT_Normal,,,,,KF8mpDpLREmYaHKCLsyjTg,,,,N,0,0,,,2012-06-19 11:46,2012-06-20 10:09,admin,admin
425,144433,5115,22776,6087,0,0,N,N,N,CP_Drtn,TT_FinMile,DT_FixedDrtn,RV_OK,TK_NotStart,4229GM120,Enppi scope completion,,1592,1592,0,0,0,0,0,0,0,0,,,,2013-09-26 16:00,2013-09-26 16:00,,2013-03-11 16:00,2013-03-11 16:00,2013-03-11 16:00,2013-03-11 16:00,2013-03-11 16:00,2013-03-11 16:00,,2013-09-26 16:00,2013-09-26 16:00,,PT_Normal,,,,,jz1wA8HWJUuZG16kRCHH7g,BiEujtK1VU2+qG7Mqg1nkw,,,N,0,0,,,2012-06-19 11:46,2012-06-20 09:59,admin,admin
426,144434,5115,22776,6085,0,100,N,N,N,CP_Drtn,TT_Mile,DT_FixedDrtn,RV_OK,TK_Complete,4229GM10,Project Coming into force / Kick-off meeting,,,,0,0,0,0,0,0,0,0,,2011-08-15 08:00,2011-08-15 08:00,,,,,,,,2011-08-15 08:00,2011-08-15 08:00,,,,,PT_Normal,,,,,h3VJEydaV0WQf5u607g5VA,cEclb7XgSZ2M9TMglt0yjw,,,N,0,0,,,2012-06-19 11:46,2012-06-20 10:09,admin,admin
427,144435,5115,22776,6085,0,0,N,N,N,CP_Drtn,TT_FinMile,DT_FixedDrtn,RV_OK,TK_NotStart,4229GM100,Engineering completion,,1296,152,0,0,0,0,0,0,0,0,,,,2013-09-26 16:00,2013-09-26 16:00,,2013-02-12 16:00,2013-02-12 16:00,2013-02-12 16:00,2013-02-12 16:00,2013-02-12 16:00,2013-02-12 16:00,,2013-09-26 16:00,2013-09-26 16:00,,PT_Normal,,,,,tDvKmtQE4ECztoZbMIHuzA,,,,N,0,0,,,2012-06-19 11:46,2012-06-20 09:59,admin,admin
428,144436,5115,22776,6085,0,100,N,N,N,CP_Drtn,TT_FinMile,DT_FixedDrtn,RV_OK,TK_Complete,4229GM140,Change order 1 approval,,,,0,0,0,0,0,0,0,0,,2011-10-16 16:00,2011-10-16 16:00,,,,,,,,2011-10-16 16:00,2011-10-16 16:00,,,,,PT_Normal,,,,,wyh93YbOf0q+126Y4hlPqA,,,,N,0,0,,,2012-06-19 11:46,2012-06-20 10:09,admin,admin
429,144437,5115,22776,6087,0,0,N,N,N,CP_Drtn,TT_FinMile,DT_FixedDrtn,RV_OK,TK_NotStart,4229GM110,Material delivered at site- except Choke valve (offshore installation),,2024,432,0,0,0,0,0,0,0,0,,,,2013-09-26 16:00,2013-09-26 16:00,,2013-01-16 16:00,2013-01-16 16:00,2013-01-16 16:00,2013-01-16 16:00,2013-01-16 16:00,2013-01-16 16:00,,2013-09-26 16:00,2013-09-26 16:00,,PT_Normal,,,,,BEqCbNw/w0OtzgDOHAb7JA,p1tAFd/EwEWZbX7CxHkw5g,,,N,0,0,,,2012-06-19 11:46,2012-06-20 09:59,admin,admin
430,144438,5115,22827,6085,1,100,N,N,N,CP_Drtn,TT_Task,DT_FixedDUR2,RV_OK,TK_Complete,A1620,Riser impact risk assessment study -IFA,,,,0,0,0,0,8,0,0,0,,2012-02-15 00:00,2012-02-27 00:00,2013-09-26 16:00,2013-09-26 16:00,,2012-06-02 00:00,2012-06-02 00:00,,,2012-04-29 08:00,2012-04-29 16:00,,,,,PT_Normal,,,,,G+BLY304/k2r6qZDMhU6Mg,,,,N,0,0,,,2012-06-19 11:46,2012-06-20 10:09,admin,admin
431,144439,5115,22827,6085,1,100,N,N,N,CP_Drtn,TT_Task,DT_FixedDUR2,RV_OK,TK_Complete,A1630,Final Riser impact  risk assessment study,,,,0,0,0,0,40,0,0,0,,2012-02-28 00:00,2012-05-10 00:00,2013-09-26 16:00,2013-09-26 16:00,,2012-06-02 00:00,2012-06-02 00:00,,,2012-04-29 08:00,2012-05-03 16:00,,,,,PT_Normal,,,,,LVzags0V4kyCSwdTUVaWzA,,,,N,0,0,,,2012-06-19 11:46,2012-06-20 10:09,admin,admin
432,144440,5115,22829,6085,1,0,N,N,N,CP_Drtn,TT_Task,DT_FixedDUR2,RV_OK,TK_NotStart,4229ELP500,Interconnection wiring diagram-Construction,,2200,0,80,0,0,0,80,0,0,0,,,,2013-09-08 08:00,2013-09-19 16:00,,2012-08-05 08:00,2012-08-16 16:00,2012-08-05 08:00,2012-08-16 16:00,2012-08-05 08:00,2012-08-16 16:00,,2013-09-08 08:00,2013-09-19 16:00,,PT_Normal,,,,,czaUP3VB4kSmktH/9Qjg+w,,,,N,0,0,,,2012-06-19 11:46,2012-06-20 09:59,admin,admin
433,144441,5115,22829,6085,1,100,N,N,N,CP_Drtn,TT_Task,DT_FixedDUR2,RV_OK,TK_Complete,4229ELP510,F&G installation details -Approval,,,,0,0,0,0,80,0,0,0,,2011-11-13 00:00,2012-02-15 00:00,2013-09-22 08:00,2013-09-22 08:00,,2012-06-02 00:00,2012-06-02 00:00,,,2011-12-04 08:00,2011-12-15 16:00,,,,,PT_Normal,,,,,BcLDNZ6ftUGVOzveYov38g,,,,N,0,0,,,2012-06-19 11:46,2012-06-20 10:09,admin,admin
434,144442,5115,22829,6085,1,0,N,N,N,CP_Drtn,TT_Task,DT_FixedDUR2,RV_OK,TK_Active,4229ELP520,F&G installation details -Design,,2640,0,0,0,0,0,80,0,0,0,,2012-02-26 00:00,,2013-09-19 16:00,2013-09-19 16:00,2012-05-31 16:00,2012-06-03 08:00,2012-06-03 08:00,2012-06-03 08:00,2012-06-03 08:00,2012-03-04 08:00,2012-03-15 16:00,,2013-09-19 16:00,2013-09-19 16:00,,PT_Normal,,,,,zAdipFwTlkyCmocYgiOE5w,,,,N,0,0,,,2012-06-19 11:46,2012-06-20 09:59,admin,admin
435,144443,5115,22829,6085,1,0,N,N,N,CP_Drtn,TT_Task,DT_FixedDUR2,RV_OK,TK_NotStart,4229ELP530,F&G installation details -Construction,,2200,904,40,0,0,0,40,0,0,0,,,,2013-09-22 08:00,2013-09-26 16:00,,2012-08-26 08:00,2012-08-30 16:00,2012-08-26 08:00,2012-08-30 16:00,2012-08-26 08:00,2012-08-30 16:00,,2013-09-22 08:00,2013-09-26 16:00,,PT_Normal,,,,,bf5NCw9nNUO+K4tBXOGQOw,,,,N,0,0,,,2012-06-19 11:46,2012-06-20 09:59,admin,admin
436,144444,5115,22829,6085,1,100,N,N,N,CP_Drtn,TT_Task,DT_FixedDUR2,RV_OK,TK_Complete,4229ELP70,F& G detection layout -Approval,,,,0,0,0,0,80,0,0,0,,2011-11-22 00:00,2011-12-28 00:00,2013-09-22 08:00,2013-09-22 08:00,,2012-06-02 00:00,2012-06-02 00:00,,,2011-12-04 08:00,2011-12-15 16:00,,,,,PT_Normal,,,,,EB6vMfg7MUOVYTn8Y9fqyg,,,,N,0,0,,,2012-06-19 11:46,2012-06-20 10:09,admin,admin
437,144445,5115,22829,6085,1,100,N,N,N,CP_Drtn,TT_Task,DT_FixedDUR2,RV_OK,TK_Complete,4229ELP220,F& G detection layout -Design,,,,0,0,0,0,120,0,0,0,,2012-01-19 00:00,2012-02-27 00:00,2013-09-22 08:00,2013-09-22 08:00,,2012-06-02 00:00,2012-06-02 00:00,,,2012-03-04 08:00,2012-03-22 16:00,,,,,PT_Normal,,,,,Y4U702KEwEK7o2zMgKy/WQ,,,,N,0,0,,,2012-06-19 11:46,2012-06-20 10:09,admin,admin
438,144446,5115,22829,6085,1,0,N,N,N,CP_Drtn,TT_Task,DT_FixedDUR2,RV_OK,TK_NotStart,4229ELP360,F& G detection layout -Construction,,2240,40,120,0,0,0,120,0,0,0,,,,2013-09-01 08:00,2013-09-19 16:00,,2012-07-22 08:00,2012-08-09 16:00,2012-07-22 08:00,2012-08-09 16:00,2012-07-22 08:00,2012-08-09 16:00,,2013-09-01 08:00,2013-09-19 16:00,,PT_Normal,,,,,LqUgO6dqDEqKSi0kkgcZVQ,,,,N,0,0,,,2012-06-19 11:46,2012-06-20 09:59,admin,admin
439,144447,5115,22829,6085,1,100,N,N,N,CP_Drtn,TT_Task,DT_FixedDUR2,RV_OK,TK_Complete,4229ELP80,"Fire fighting, Safety equipment & escape route layout-Approval",,,,0,0,0,0,80,0,0,0,,2011-11-22 00:00,2011-12-29 08:00,2013-09-22 08:00,2013-09-22 08:00,,2012-06-02 00:00,2012-06-02 00:00,,,2011-12-04 08:00,2011-12-15 16:00,,,,,PT_Normal,,,,,DHjanQPpQEeRyqTsgd1rZA,,,,N,0,0,,,2012-06-19 11:46,2012-06-20 10:09,admin,admin
440,144448,5115,22829,6085,1,100,N,N,N,CP_Drtn,TT_Task,DT_FixedDUR2,RV_OK,TK_Complete,4229ELP230,"Fire fighting, Safety equipment & escape route layout-Design",,,,0,0,0,0,120,0,0,0,2012-01-01 00:00,2012-01-29 00:00,2012-01-29 00:00,2013-09-22 08:00,2013-09-22 08:00,,2012-06-02 00:00,2012-06-02 00:00,,,2012-03-04 08:00,2012-03-22 16:00,,,,CS_MSOA,PT_Normal,,,,,BuSlRtsag0uSU2pYkCqzww,,,,N,0,0,,,2012-06-19 11:46,2012-06-20 10:09,admin,admin
441,144449,5115,22829,6085,1,0,N,N,N,CP_Drtn,TT_Task,DT_FixedDUR2,RV_OK,TK_NotStart,4229ELP380,"Fire fighting, Safety equipment & escape route layout-Construction",,2200,0,80,0,0,0,80,0,0,0,,,,2013-08-25 08:00,2013-09-05 16:00,,2012-07-22 08:00,2012-08-02 16:00,2012-07-22 08:00,2012-08-02 16:00,2012-07-22 08:00,2012-08-02 16:00,,2013-08-25 08:00,2013-09-05 16:00,,PT_Normal,,,,,3HvlZh4CTkC7LKEoE+0gHQ,,,,N,0,0,,,2012-06-19 11:46,2012-06-20 09:59,admin,admin
442,144450,5115,22829,6085,1,100,N,N,N,CP_Drtn,TT_Task,DT_FixedDUR2,RV_OK,TK_Complete,4229ELP110,F& G cable routing -Approval,,,,0,0,0,0,40,0,0,0,,2012-01-01 08:00,2012-01-26 00:00,2013-08-19 08:00,2013-08-19 08:00,,2012-06-02 00:00,2012-06-02 00:00,,,2012-01-01 08:00,2012-01-05 16:00,,,,,PT_Normal,,,,,SDy6aHJZUE2yUplpae5o3w,,,,N,0,0,,,2012-06-19 11:46,2012-06-20 10:09,admin,admin
443,144451,5115,22829,6085,1,100,N,N,N,CP_Drtn,TT_Task,DT_FixedDUR2,RV_OK,TK_Complete,4229ELP260,F& G cable routing -Design,,,,0,0,0,0,80,0,0,0,,2012-01-29 00:00,2012-02-06 00:00,2013-09-22 08:00,2013-09-22 08:00,,2012-06-02 00:00,2012-06-02 00:00,,,2012-03-06 08:00,2012-03-19 16:00,,,,,PT_Normal,,,,,a5XfISl4fE2R7I6aBmm0qw,,,,N,0,0,,,2012-06-19 11:46,2012-06-20 10:09,admin,admin
444,144452,5115,22829,6085,1,0,N,N,N,CP_Drtn,TT_Task,DT_FixedDUR2,RV_OK,TK_NotStart,4229ELP390,F& G cable routing -Construction,,2200,0,80,0,0,0,80,0,0,0,,,,2013-09-01 08:00,2013-09-12 16:00,,2012-07-29 08:00,2012-08-09 16:00,2012-07-29 08:00,2012-08-09 16:00,2012-07-29 08:00,2012-08-09 16:00,,2013-09-01 08:00,2013-09-12 16:00,,PT_Normal,,,,,TqEPqKpqR0y0vJzG5wAyMw,,,,N,0,0,,,2012-06-19 11:46,2012-06-20 09:59,admin,admin
445,144453,5115,22829,6085,1,100,N,N,N,CP_Drtn,TT_Task,DT_FixedDUR2,RV_OK,TK_Complete,4229ELP40,Hazardous area classification schedule-IFA,,,,0,0,0,0,24,0,0,0,,2011-11-10 00:00,2011-11-13 00:00,2013-09-15 08:00,2013-09-15 08:00,,2012-06-02 00:00,2012-06-02 00:00,,,2011-12-18 08:00,2011-12-20 16:00,,,,,PT_Normal,,,,,E7EXr1CWaEmKLwuqoBFdUQ,,,,N,0,0,,,2012-06-19 11:46,2012-06-20 10:09,admin,admin
446,144454,5115,22829,6085,1,100,N,N,N,CP_Drtn,TT_Task,DT_FixedDUR2,RV_OK,TK_Complete,4229ELP150,Hazardous area classification schedule-IFD,,,,0,0,0,0,24,0,0,0,,2011-11-20 00:00,2011-11-23 00:00,2013-09-19 16:00,2013-09-19 16:00,,2012-06-02 00:00,2012-06-02 00:00,,,2012-01-09 08:00,2012-01-11 16:00,,,,,PT_Normal,,,,,IQXrpP1bu0qTIrDhY/YXSg,,,,N,0,0,,,2012-06-19 11:46,2012-06-20 10:09,admin,admin
447,144455,5115,22829,6085,1,0,N,N,N,CP_Drtn,TT_Task,DT_FixedDUR2,RV_OK,TK_NotStart,4229ELP370,Hazardous area classification schedule-IFC,,2216,0,24,0,0,0,24,0,0,0,,,,2013-08-27 08:00,2013-08-29 16:00,,2012-07-22 08:00,2012-07-24 16:00,2012-07-22 08:00,2012-07-24 16:00,2012-07-22 08:00,2012-07-24 16:00,,2013-08-27 08:00,2013-08-29 16:00,,PT_Normal,,,,,NJFkjGWZjUGpBC8WL8PTQA,,,,N,0,0,,,2012-06-19 11:46,2012-06-20 09:59,admin,admin
448,144456,5115,22829,6085,1,100,N,N,N,CP_Drtn,TT_Task,DT_FixedDUR2,RV_OK,TK_Complete,4229ELP450,F& G cable list -Approval,,,,0,0,0,0,40,0,0,0,2012-01-09 00:00,2012-01-09 08:00,2012-01-19 00:00,2013-09-22 08:00,2013-09-22 08:00,,2012-06-02 00:00,2012-06-02 00:00,,,2012-01-09 08:00,2012-01-15 16:00,,,,CS_MSOA,PT_Normal,,,,,h4Re1w8lnkGGLDw7muos1A,,,,N,0,0,,,2012-06-19 11:46,2012-06-20 10:09,admin,admin
449,144457,5115,22829,6085,1,100,N,N,N,CP_Drtn,TT_Task,DT_FixedDUR2,RV_OK,TK_Complete,4229ELP460,F& G cable list -Design,,,,0,0,0,0,40,0,0,0,,2012-01-15 00:00,2012-01-24 00:00,2013-09-22 08:00,2013-09-22 08:00,,2012-06-02 00:00,2012-06-02 00:00,,,2012-03-04 08:00,2012-03-08 16:00,,,,,PT_Normal,,,,,Ki2jJDvV10eyh588kqw+Ag,,,,N,0,0,,,2012-06-19 11:46,2012-06-20 10:09,admin,admin
450,144458,5115,22829,6085,1,0,N,N,N,CP_Drtn,TT_Task,DT_FixedDUR2,RV_OK,TK_NotStart,4229ELP470,F& G cable list -Construction,,2240,40,40,0,0,0,40,0,0,0,,,,2013-09-15 08:00,2013-09-19 16:00,,2012-08-05 08:00,2012-08-09 16:00,2012-08-05 08:00,2012-08-09 16:00,2012-08-05 08:00,2012-08-09 16:00,,2013-09-15 08:00,2013-09-19 16:00,,PT_Normal,,,,,IWNPe7nNTUmQmGHw5pslvg,,,,N,0,0,,,2012-06-19 11:46,2012-06-20 09:59,admin,admin
451,144459,5115,22829,6085,1,100,N,N,N,CP_Drtn,TT_Task,DT_FixedDUR2,RV_OK,TK_Complete,4229ELP480,Interconnection wiring diagram-Approval,,,,0,0,0,0,40,0,0,0,,2012-01-04 08:00,2012-02-01 00:00,2013-09-22 08:00,2013-09-22 08:00,,2012-06-02 00:00,2012-06-02 00:00,,,2012-01-04 08:00,2012-01-10 16:00,,,,,PT_Normal,,,,,D8emGj/EvkmVPtjAzF/aQg,,,,N,0,0,,,2012-06-19 11:46,2012-06-20 10:09,admin,admin
452,144460,5115,22829,6085,1,100,N,N,N,CP_Drtn,TT_Task,DT_FixedDUR2,RV_OK,TK_Complete,4229ELP490,Interconnection wiring diagram-Design,,,,0,0,0,0,80,0,0,0,,2012-03-15 00:00,2012-03-20 00:00,2013-09-22 08:00,2013-09-22 08:00,,2012-06-02 00:00,2012-06-02 00:00,,,2012-04-01 08:00,2012-04-12 16:00,,,,,PT_Normal,,,,,GAeVPNq9Q0uo6x//XfZ17Q,,,,N,0,0,,,2012-06-19 11:46,2012-06-20 10:09,admin,admin
453,144461,5115,22838,6085,1,100,N,N,N,CP_Drtn,TT_Task,DT_FixedDUR2,RV_OK,TK_Complete,4229ELP130,HAZOP meeting /Report,,,,0,0,0,0,80,0,0,0,2012-02-06 08:00,2012-02-02 00:00,2012-02-21 00:00,2013-08-05 08:00,2013-08-05 08:00,,2012-06-02 00:00,2012-06-02 00:00,,,2012-03-04 08:00,2012-03-15 16:00,,,,CS_MSO,PT_Normal,,,,,meEEhvICQE2Tw86JVN0b0A,,,,N,0,0,,,2012-06-19 11:46,2012-06-20 10:09,admin,admin
454,144462,5115,22838,6085,1,100,N,N,N,CP_Drtn,TT_Task,DT_FixedDUR2,RV_OK,TK_Complete,4229ELP10,HSE Plan -Approval,,,,0,0,0,0,80,0,0,0,,2011-09-29 08:00,2011-10-13 16:00,2013-08-13 08:00,2013-08-13 08:00,,2012-06-02 00:00,2012-06-02 00:00,,,2011-09-29 08:00,2011-10-13 16:00,,,,,PT_Normal,,,,,hV9fR668xEWSodgdYvcZzQ,,,,N,0,0,,,2012-06-19 11:46,2012-06-20 10:09,admin,admin
455,144463,5115,22838,6085,1,100,N,N,N,CP_Drtn,TT_Task,DT_FixedDUR2,RV_OK,TK_Complete,4229ELP20,HSE Plan -Final,,,,0,0,0,0,40,0,0,0,,2011-11-13 00:00,2011-11-15 00:00,2013-09-17 08:00,2013-09-17 08:00,,2012-06-02 00:00,2012-06-02 00:00,,,2011-12-04 08:00,2011-12-08 16:00,,,,,PT_Normal,,,,,H8NRGwn9nUGCYhj7NL+Zbg,,,,N,0,0,,,2012-06-19 11:46,2012-06-20 10:09,admin,admin
456,144464,5115,22838,6085,1,100,N,N,N,CP_Drtn,TT_Task,DT_FixedDUR2,RV_OK,TK_Complete,4229ELP30,HSE philosophy - Approval,,,,0,0,0,0,80,0,0,0,,2011-10-16 00:00,2011-11-03 00:00,2013-08-13 08:00,2013-08-13 08:00,,2012-06-02 00:00,2012-06-02 00:00,,,2011-12-04 08:00,2011-12-15 16:00,,,,,PT_Normal,,,,,BjnKHpAwBUq+mPz9DaJ/ng,,,,N,0,0,,,2012-06-19 11:46,2012-06-20 10:09,admin,admin
457,144465,5115,22838,6085,1,100,N,N,N,CP_Drtn,TT_Task,DT_FixedDUR2,RV_OK,TK_Complete,4229ELP90,HSE philosophy - Final,,,,0,0,0,0,40,0,0,0,,2011-11-20 00:00,2011-11-23 00:00,2013-09-17 08:00,2013-09-17 08:00,,2012-06-02 00:00,2012-06-02 00:00,,,2011-12-25 08:00,2011-12-29 16:00,,,,,PT_Normal,,,,,flHKeGIqwUaIjfaFKNR18A,,,,N,0,0,,,2012-06-19 11:46,2012-06-20 10:09,admin,admin
458,144466,5115,22838,6085,1,100,N,N,N,CP_Drtn,TT_Task,DT_FixedDUR2,RV_OK,TK_Complete,4229ELP410,SIL Review report-Final,,,,0,0,0,0,88,0,0,0,,2012-04-23 00:00,2012-05-30 00:00,2013-09-26 16:00,2013-09-26 16:00,,2012-06-02 00:00,2012-06-02 00:00,,,2012-06-03 08:00,2012-06-17 16:00,,,,,PT_Normal,,,,,fH2mQcGBBkq/KmOlJkP/8w,,,,N,0,0,,,2012-06-19 11:46,2012-06-20 10:09,admin,admin
459,144467,5115,22838,6085,1,100,N,N,N,CP_Drtn,TT_Task,DT_FixedDUR2,RV_OK,TK_Complete,4229ELP100,Fire & explosion HAZARD analysis- Approval,,,,0,0,0,0,120,0,0,0,,2011-11-22 00:00,2011-11-23 00:00,2013-08-13 08:00,2013-08-13 08:00,,2012-06-02 00:00,2012-06-02 00:00,,,2011-12-04 08:00,2011-12-22 16:00,,,,,PT_Normal,,,,,qJoYERKPQUScwyqi2K2YLw,,,,N,0,0,,,2012-06-19 11:46,2012-06-20 10:09,admin,admin
460,144468,5115,22838,6085,1,100,N,N,N,CP_Drtn,TT_Task,DT_FixedDUR2,RV_OK,TK_Complete,4229ELP140,Fire & Explosion HAZARD analysis- Final,,,,0,0,0,0,80,0,0,0,,2012-02-16 00:00,2012-03-05 00:00,2013-08-13 08:00,2013-08-13 08:00,,2012-06-02 00:00,2012-06-02 00:00,,,2012-01-01 08:00,2012-01-12 16:00,,,,,PT_Normal,,,,,zQ59YoJXhkizrJGSD2VuSA,,,,N,0,0,,,2012-06-19 11:46,2012-06-20 10:09,admin,admin
461,144469,5115,22838,6085,1,0,N,N,N,CP_Drtn,TT_Task,DT_FixedDUR2,RV_OK,TK_NotStart,4229ELP120,SAMS report-Approval,,2368,0,80,0,0,0,80,0,0,0,,,,2013-08-13 08:00,2013-08-26 16:00,,2012-06-11 08:00,2012-06-24 16:00,2012-06-11 08:00,2012-06-24 16:00,2012-06-11 08:00,2012-06-24 16:00,,2013-08-13 08:00,2013-08-26 16:00,,PT_Normal,,,,,sdHSe213MEakpKq1EsHZSg,,,,N,0,0,,,2012-06-19 11:46,2012-06-20 09:59,admin,admin
462,144470,5115,22838,6085,1,0,N,N,N,CP_Drtn,TT_Task,DT_FixedDUR2,RV_OK,TK_NotStart,4229ELP180,SAMS report-Final,,2368,0,80,0,0,0,80,0,0,0,,,,2013-09-03 08:00,2013-09-16 16:00,,2012-07-02 08:00,2012-07-15 16:00,2012-07-02 08:00,2012-07-15 16:00,2012-07-02 08:00,2012-07-15 16:00,,2013-09-03 08:00,2013-09-16 16:00,,PT_Normal,,,,,B0aLGoFbgkSYQS93/gQ3NA,,,,N,0,0,,,2012-06-19 11:46,2012-06-20 09:59,admin,admin
463,144471,5115,22838,6085,1,0,N,N,N,CP_Drtn,TT_Task,DT_FixedDUR2,RV_OK,TK_NotStart,4229ELP340,HAZARD register,,2368,1072,64,0,0,0,64,0,0,0,,,,2013-09-17 08:00,2013-09-26 16:00,,2012-07-16 08:00,2012-07-25 16:00,2012-07-16 08:00,2012-07-25 16:00,2012-07-16 08:00,2012-07-25 16:00,,2013-09-17 08:00,2013-09-26 16:00,,PT_Normal,,,,,ejbhbap6CUyqOpgq/u7LJA,,,,N,0,0,,,2012-06-19 11:46,2012-06-20 09:59,admin,admin
464,144472,5115,22838,6085,1,100,N,N,N,CP_Drtn,TT_Task,DT_FixedDUR2,RV_OK,TK_Complete,4229ELP190,SCE performance standards-Approval,,,,0,0,0,0,80,0,0,0,,2012-02-09 00:00,2012-02-22 00:00,2013-08-13 08:00,2013-08-13 08:00,,2012-06-02 00:00,2012-06-02 00:00,,,2012-03-20 08:00,2012-04-02 16:00,,,,,PT_Normal,,,,,jaNY1zvC20GySf31PgyKpw,,,,N,0,0,,,2012-06-19 11:46,2012-06-20 10:09,admin,admin
465,144473,5115,22838,6085,1,100,N,N,N,CP_Drtn,TT_Task,DT_FixedDUR2,RV_OK,TK_Complete,4229ELP200,QRA -Approval,,,,0,0,0,0,120,0,0,0,,2012-02-26 00:00,2012-03-20 00:00,2013-08-13 08:00,2013-08-13 08:00,,2012-06-02 00:00,2012-06-02 00:00,,,2012-03-04 08:00,2012-03-22 16:00,,,,,PT_Normal,,,,,uwm16Uu8PEi68pBGHFJ9EA,,,,N,0,0,,,2012-06-19 11:46,2012-06-20 10:09,admin,admin
466,144474,5115,22838,6085,1,100,N,N,N,CP_Drtn,TT_Task,DT_FixedDUR2,RV_OK,TK_Complete,4229ELP300,QRA -Final,,,,0,0,0,0,120,0,0,0,,2012-04-15 08:00,2012-04-18 00:00,2013-09-17 08:00,2013-09-17 08:00,,2012-06-02 00:00,2012-06-02 00:00,,,2012-04-15 08:00,2012-05-03 16:00,,,,,PT_Normal,,,,,k6YqwdAxtEajypM1ajX3yg,,,,N,0,0,,,2012-06-19 11:46,2012-06-20 10:09,admin,admin
467,144475,5115,22838,6085,1,100,N,N,N,CP_Drtn,TT_Task,DT_FixedDUR2,RV_OK,TK_Complete,4229ELP240,HAZID report,,,,0,0,0,0,80,0,0,0,,2012-03-28 00:00,2012-05-03 00:00,2013-08-13 08:00,2013-08-13 08:00,,2012-06-02 00:00,2012-06-02 00:00,,,2012-04-01 08:00,2012-04-12 16:00,,,,,PT_Normal,,,,,H57GmAPvB0iBiHUB1k80EQ,,,,N,0,0,,,2012-06-19 11:46,2012-06-20 10:09,admin,admin
468,144476,5115,22838,6085,1,100,N,N,N,CP_Drtn,TT_Task,DT_FixedDUR2,RV_OK,TK_Complete,4229ELP250,ENVID report,,,,0,0,0,0,80,0,0,0,,2012-03-28 00:00,2012-05-03 00:00,2013-08-13 08:00,2013-08-13 08:00,,2012-06-02 00:00,2012-06-02 00:00,,,2012-04-01 08:00,2012-04-12 16:00,,,,,PT_Normal,,,,,rmkmosEDbkerJCr0fch0Mw,,,,N,0,0,,,2012-06-19 11:46,2012-06-20 10:09,admin,admin
469,144477,5115,22838,6085,1,0,N,N,N,CP_Drtn,TT_Task,DT_FixedDUR2,RV_OK,TK_Active,4229ELP210,HAZOP close out report,,2368,0,48,0,0,0,120,0,0,0,,2012-03-28 00:00,,2013-08-05 08:00,2013-08-12 16:00,2012-06-10 16:00,2012-06-03 08:00,2012-06-10 16:00,2012-06-03 08:00,2012-06-10 16:00,2012-04-03 08:00,2012-04-23 16:00,,2013-08-05 08:00,2013-08-12 16:00,,PT_Normal,,,,,zTt/VRvTZUaTxun6W/jjWg,,,,N,0,0,,,2012-06-19 11:46,2012-06-20 09:59,admin,admin
470,144478,5115,22838,6085,1,100,N,N,N,CP_Drtn,TT_Task,DT_FixedDUR2,RV_OK,TK_Complete,4229ELP280,PSSR report-Approval,,,,0,0,0,0,120,0,0,0,,2012-03-31 00:00,2012-03-31 00:00,2013-08-13 08:00,2013-08-13 08:00,,2012-06-02 00:00,2012-06-02 00:00,,,2012-04-01 08:00,2012-04-19 16:00,,,,,PT_Normal,,,,,CnyFh6qQL0aB76OaBFnb2A,,,,N,0,0,,,2012-06-19 11:46,2012-06-20 10:09,admin,admin
471,144479,5115,22838,6085,1,0,N,N,N,CP_Drtn,TT_Task,DT_FixedDUR2,RV_OK,TK_NotStart,4229ELP290,CHAZOP review report,,2240,944,96,0,0,0,96,0,0,0,,,,2013-09-11 08:00,2013-09-26 16:00,,2012-08-01 08:00,2012-08-16 16:00,2012-08-01 08:00,2012-08-16 16:00,2012-08-01 08:00,2012-08-16 16:00,,2013-09-11 08:00,2013-09-26 16:00,,PT_Normal,,,,,bsrPJCiJs0WamLWl/YfwKA,,,,N,0,0,,,2012-06-19 11:46,2012-06-20 09:59,admin,admin
472,144480,5115,22838,6085,1,100,N,N,N,CP_Drtn,TT_Task,DT_FixedDUR2,RV_OK,TK_Complete,4229ELP160,SIL Review report-Approval,,,,0,0,0,0,80,0,0,0,2012-04-19 00:00,2012-04-19 00:00,2012-05-09 00:00,2013-08-13 08:00,2013-08-13 08:00,,2012-06-02 00:00,2012-06-02 00:00,,,2012-04-19 08:00,2012-05-02 16:00,,,,CS_MSOA,PT_Normal,,,,,PBDsrIQ9GEK6anBQaL0PZQ,,,,N,0,0,,,2012-06-19 11:46,2012-06-20 10:09,admin,admin
473,144481,5115,22838,6085,1,100,N,N,N,CP_Drtn,TT_Task,DT_FixedDUR2,RV_OK,TK_Complete,4229ELP50,Update & issue safety life cycle-Approval,,,,0,0,0,0,0,0,0,0,,2012-02-19 00:00,2012-02-23 00:00,2013-09-17 08:00,2013-09-17 08:00,,2012-06-02 00:00,2012-06-02 00:00,,,2012-03-04 08:00,2012-03-04 08:00,,,,,PT_Normal,,,,,KTa/iG2KcEii4esNbUHbww,,,,N,0,0,,,2012-06-19 11:46,2012-06-20 10:09,admin,admin
474,144482,5115,22838,6085,1,100,N,N,N,CP_Drtn,TT_Task,DT_FixedDUR2,RV_OK,TK_Complete,4229ELP270,SCE performance standards-Final,,,,0,0,0,0,40,0,0,0,,2012-03-15 00:00,2012-03-20 00:00,2013-09-26 16:00,2013-09-26 16:00,,2012-06-02 00:00,2012-06-02 00:00,,,2012-04-01 08:00,2012-04-05 16:00,,,,,PT_Normal,,,,,4svmx1OIWUaON+v2X9WGew,,,,N,0,0,,,2012-06-19 11:46,2012-06-20 10:09,admin,admin
475,144483,5115,22838,6085,1,100,N,N,N,CP_Drtn,TT_Task,DT_FixedDUR2,RV_OK,TK_Complete,4229ELP350,PSSR report-Final,,,,0,0,0,0,80,0,0,0,,2012-03-31 00:00,2012-03-31 00:00,2013-09-26 16:00,2013-09-26 16:00,,2012-06-02 00:00,2012-06-02 00:00,,,2012-04-15 08:00,2012-04-26 16:00,,,,,PT_Normal,,,,,7We7uRbHdkaPj2aIWqbtLQ,,,,N,0,0,,,2012-06-19 11:46,2012-06-20 10:09,admin,admin
476,144484,5115,22838,6085,1,100,N,N,N,CP_Drtn,TT_Task,DT_FixedDUR2,RV_OK,TK_Complete,4229ELP540,Update & issue safety life cycle-Design,,,,0,0,0,0,176,0,0,0,,2012-04-05 00:00,2012-04-10 00:00,2013-09-26 16:00,2013-09-26 16:00,,2012-06-02 00:00,2012-06-02 00:00,,,2012-04-01 08:00,2012-04-30 16:00,,,,,PT_Normal,,,,,ZBusZZr2gUyRJNt3bJSc2Q,,,,N,0,0,,,2012-06-19 11:46,2012-06-20 10:09,admin,admin
477,144485,5115,22830,6085,1,0,N,N,N,CP_Drtn,TT_Task,DT_FixedDUR2,RV_OK,TK_NotStart,4229ELP580,V.P.R for fire  & Gas detection,,2160,1016,280,0,0,0,280,0,0,0,,,,2013-08-11 08:00,2013-09-26 16:00,,2012-07-15 08:00,2012-09-06 16:00,2012-07-15 08:00,2012-09-06 16:00,2012-07-15 08:00,2012-09-06 16:00,,2013-08-11 08:00,2013-09-26 16:00,,PT_Normal,,,,,edfoP8Q+jkC71vR5vwI5VA,FUD2dy+nUkWc4VQGU8Fo/w,,,N,0,0,,,2012-06-19 11:46,2012-06-20 09:59,admin,admin
478,144486,5115,22830,6085,1,100,N,N,N,CP_Drtn,TT_Task,DT_FixedDUR2,RV_OK,TK_Complete,4229ELP590,MRQ for life saving equioment,,,,0,0,0,0,40,0,0,0,,2011-12-29 00:00,2012-01-02 16:00,2013-09-07 08:00,2013-09-07 08:00,,2012-06-02 00:00,2012-06-02 00:00,,,2012-01-01 08:00,2012-01-05 16:00,,,,,PT_Normal,,,,,5ozRz/CRg0uRW35xKf/RuA,ZarfSMY5fUiYAgPPzTZXNw,,,N,0,0,,,2012-06-19 11:46,2012-06-20 10:09,admin,admin
479,144487,5115,22830,6085,1,100,N,N,N,CP_Drtn,TT_Task,DT_FixedDUR2,RV_OK,TK_Complete,4229ELP600,T.E.R for life saving equipment,,,,0,0,0,0,120,0,0,0,,2012-02-15 00:00,2012-05-15 00:00,2013-09-07 08:00,2013-09-07 08:00,,2012-06-02 00:00,2012-06-02 00:00,,,2012-03-04 08:00,2012-03-22 16:00,,,,,PT_Normal,,,,,HZLVI8xMbkCt4Dj3RYbUOg,OB2BdTMxnk6owJhgDyBB4w,,,N,0,0,,,2012-06-19 11:46,2012-06-20 10:09,admin,admin
480,144488,5115,22830,6085,1,100,N,N,N,CP_Drtn,TT_Task,DT_FixedDUR2,RV_OK,TK_Complete,4229ELP610,MRP for life saving equipment,,,,0,0,0,0,40,0,0,0,,2012-05-15 00:00,2012-05-15 00:00,2013-09-07 08:00,2013-09-07 08:00,,2012-06-02 00:00,2012-06-02 00:00,,,2012-06-18 08:00,2012-06-24 16:00,,,,,PT_Normal,,,,,V+VTMK6up0WtR1wKFWvPOg,KKpGjp0KxUWDHbPmNRucRw,,,N,0,0,,,2012-06-19 11:46,2012-06-20 10:09,admin,admin
481,144489,5115,22830,6085,1,100,N,N,N,CP_Drtn,TT_Task,DT_FixedDUR2,RV_OK,TK_Complete,4229ELP620,V.P.R for life saving equipment,,,,0,0,0,0,240,0,0,0,,2012-05-15 00:00,2012-05-15 00:00,2013-09-26 16:00,2013-09-26 16:00,,2012-06-02 00:00,2012-06-02 00:00,,,2012-07-08 08:00,2012-08-16 16:00,,,,,PT_Normal,,,,,L4zZuxgIsEKgYhavlrCqGg,FUD2dy+nUkWc4VQGU8Fo/w,,,N,0,0,,,2012-06-19 11:46,2012-06-20 10:09,admin,admin
482,144490,5115,22830,6085,1,100,N,N,N,CP_Drtn,TT_Task,DT_FixedDUR2,RV_OK,TK_Complete,4229ELP60,MRQ for fire fighting system,,,,0,0,0,0,64,0,0,0,,2011-11-21 00:00,2011-11-22 00:00,2013-03-07 08:00,2013-03-07 08:00,,2012-06-02 00:00,2012-06-02 00:00,,,2011-12-04 08:00,2011-12-13 16:00,,,,,PT_Normal,,,,,k7NDK5nqjU6x/gwilY4Dmg,,,,N,0,0,,,2012-06-19 11:46,2012-06-20 10:09,admin,admin
483,144491,5115,22830,6085,1,100,N,N,N,CP_Drtn,TT_Task,DT_FixedDUR2,RV_OK,TK_Complete,4229ELP170,T.E.R for fire fighting system,,,,0,0,0,0,160,0,0,0,2012-04-03 00:00,2012-04-03 08:00,2012-05-29 00:00,2013-03-07 08:00,2013-03-07 08:00,,2012-06-02 00:00,2012-06-02 00:00,,,2012-04-03 08:00,2012-04-30 16:00,,,,CS_MSOA,PT_Normal,,,,,WWIu93mSb0SrY90Puj7upA,,,,N,0,0,,,2012-06-19 11:46,2012-06-20 10:09,admin,admin
484,144492,5115,22830,6085,1,0,N,N,N,CP_Drtn,TT_Task,DT_FixedDUR2,RV_OK,TK_NotStart,4229ELP330,MRP for fire fighting system,,1512,0,40,0,0,0,40,0,0,0,,,,2013-04-02 08:00,2013-04-08 16:00,,2012-06-27 08:00,2012-07-03 16:00,2012-06-27 08:00,2012-07-03 16:00,2012-06-27 08:00,2012-07-03 16:00,,2013-04-02 08:00,2013-04-08 16:00,,PT_Normal,,,,,Um71e9UOtUSv+7qRn9WkQA,,,,N,0,0,,,2012-06-19 11:46,2012-06-20 09:59,admin,admin
485,144493,5115,22830,6085,1,0,N,N,N,CP_Drtn,TT_Task,DT_FixedDUR2,RV_OK,TK_NotStart,4229ELP400,V.P.R for fire fighting system,,2000,704,240,0,0,0,240,0,0,0,,,,2013-08-18 08:00,2013-09-26 16:00,,2012-08-26 08:00,2012-10-04 16:00,2012-08-26 08:00,2012-10-04 16:00,2012-08-26 08:00,2012-10-04 16:00,,2013-08-18 08:00,2013-09-26 16:00,,PT_Normal,,,,,74OSNeQZfkelKfb6pVI8VA,,,,N,0,0,,,2012-06-19 11:46,2012-06-20 09:59,admin,admin
486,144494,5115,22830,6085,1,100,N,N,N,CP_Drtn,TT_Task,DT_FixedDUR2,RV_OK,TK_Complete,4229ELP550,MRQ for fire  & Gas detection,,,,0,0,0,0,16,0,0,0,,2011-11-28 00:00,2012-01-01 16:00,2013-09-07 08:00,2013-09-07 08:00,,2012-06-02 00:00,2012-06-02 00:00,,,2011-12-08 08:00,2011-12-11 16:00,,,,,PT_Normal,,,,,2/bcOLlp8EexRlrPkbIQnQ,ZarfSMY5fUiYAgPPzTZXNw,,,N,0,0,,,2012-06-19 11:46,2012-06-20 10:09,admin,admin
487,144495,5115,22830,6085,1,100,N,N,N,CP_Drtn,TT_Task,DT_FixedDUR2,RV_OK,TK_Complete,4229ELP560,T.E.R for fire  & Gas detection,,,,0,0,0,0,120,0,0,0,,2012-02-27 00:00,2012-05-03 16:00,2013-05-07 08:00,2013-05-07 08:00,,2012-06-02 00:00,2012-06-02 00:00,,,2012-03-20 08:00,2012-04-09 16:00,,,,,PT_Normal,,,,,DNMw+4TU0Uq77jR6PUZeiw,OB2BdTMxnk6owJhgDyBB4w,,,N,0,0,,,2012-06-19 11:46,2012-06-20 10:09,admin,admin
488,144496,5115,22830,6085,1,100,N,N,N,CP_Drtn,TT_Task,DT_FixedDUR2,RV_OK,TK_Complete,4229ELP570,MRP for fire  & Gas detection,,,,0,0,0,0,40,0,0,0,,2012-05-28 00:00,2012-05-29 00:00,2013-05-07 08:00,2013-05-07 08:00,,2012-06-02 00:00,2012-06-02 00:00,,,2012-06-03 08:00,2012-06-07 16:00,,,,,PT_Normal,,,,,8UwbmPEfY06+3sK5YMifNg,KKpGjp0KxUWDHbPmNRucRw,,,N,0,0,,,2012-06-19 11:46,2012-06-20 10:09,admin,admin
489,144497,5115,22828,6085,1,100,N,N,N,CP_Drtn,TT_Task,DT_FixedDUR2,RV_OK,TK_Complete,4229EPR220,Process simulation final report,,,,0,0,0,0,80,0,0,0,,2011-11-21 00:00,2011-11-21 00:00,2013-09-26 16:00,2013-09-26 16:00,,2012-06-02 00:00,2012-06-02 00:00,,,2011-11-24 08:00,2011-12-07 16:00,,,,,PT_Normal,,,,,yfAaBWLNVUickx0i3s9wTA,,,,N,0,0,,,2012-06-19 11:46,2012-06-20 10:09,admin,admin
490,144498,5115,22828,6085,1,100,N,N,N,CP_Drtn,TT_Task,DT_FixedDUR2,RV_OK,TK_Complete,4229EPR260,Process simulation report-Approval,,,,0,0,0,0,64,0,0,0,,2011-10-31 08:00,2011-11-21 00:00,2013-09-26 16:00,2013-09-26 16:00,,2012-06-02 00:00,2012-06-02 00:00,,,2011-10-31 08:00,2011-11-16 16:00,,,,,PT_Normal,,,,,Oro33qBl3ESPUZN5my2CKw,,,,N,0,0,,,2012-06-19 11:46,2012-06-20 10:09,admin,admin
491,144499,5115,22828,6085,1,100,N,N,N,CP_Drtn,TT_Task,DT_FixedDUR2,RV_OK,TK_Complete,4229EPR100,Shutdown & control philosophy -Approval,,,,0,0,0,0,64,0,0,0,,2011-10-26 00:00,2011-11-23 00:00,2013-09-26 16:00,2013-09-26 16:00,,2012-06-02 00:00,2012-06-02 00:00,,,2011-10-30 08:00,2011-11-15 16:00,,,,,PT_Normal,,,,,Dbpx9mkRMkivxtdDxe2SlA,,,,N,0,0,,,2012-06-19 11:46,2012-06-20 10:09,admin,admin
492,144500,5115,22828,6085,1,100,N,N,N,CP_Drtn,TT_Task,DT_FixedDUR2,RV_OK,TK_Complete,4229EPR140,Shutdown & control philosophy -Final,,,,0,0,0,0,80,0,0,0,,2011-12-26 00:00,2012-05-13 00:00,2013-09-26 16:00,2013-09-26 16:00,,2012-06-02 00:00,2012-06-02 00:00,,,2011-12-08 08:00,2011-12-21 16:00,,,,,PT_Normal,,,,,qKzuiW0zwUGrvdXyU8BrLA,,,,N,0,0,,,2012-06-19 11:46,2012-06-20 10:09,admin,admin
493,144501,5115,22828,6085,1,0,N,N,N,CP_Drtn,TT_Task,DT_FixedDUR2,RV_OK,TK_NotStart,4229EPR210,"Commissioning ,Pre-commissioning & operating philosophy-IFA",,2336,0,80,0,0,0,80,0,0,0,,,,2013-08-27 08:00,2013-09-09 16:00,,2012-07-01 08:00,2012-07-12 16:00,2012-07-01 08:00,2012-07-12 16:00,2012-07-01 08:00,2012-07-12 16:00,,2013-08-27 08:00,2013-09-09 16:00,,PT_Normal,,,,,X/tJtIRxz023mk1RtnhDfA,,,,N,0,0,,,2012-06-19 11:46,2012-06-20 09:59,admin,admin
494,144502,5115,22828,6085,1,0,N,N,N,CP_Drtn,TT_Task,DT_FixedDUR2,RV_OK,TK_NotStart,4229EPR230,"Commissioning ,Pre-commissioning & operating philosophy-Final",,2336,1040,64,0,0,0,64,0,0,0,,,,2013-09-17 08:00,2013-09-26 16:00,,2012-07-22 08:00,2012-07-31 16:00,2012-07-22 08:00,2012-07-31 16:00,2012-07-22 08:00,2012-07-31 16:00,,2013-09-17 08:00,2013-09-26 16:00,,PT_Normal,,,,,3dAZoC1sN0ihYQwBMi78CA,,,,N,0,0,,,2012-06-19 11:46,2012-06-20 09:59,admin,admin
495,144503,5115,22828,6085,1,100,N,N,N,CP_Drtn,TT_Task,DT_FixedDUR2,RV_OK,TK_Complete,4229EPR110,Flow assurance report-Final,,,,0,0,0,0,40,0,0,0,,2011-11-24 08:00,2011-11-30 16:00,2013-09-26 16:00,2013-09-26 16:00,,2012-06-02 00:00,2012-06-02 00:00,,,2011-11-24 08:00,2011-11-30 16:00,,,,,PT_Normal,,,,,FFZPQJZSB0SDWqLGQFm19A,,,,N,0,0,,,2012-06-19 11:46,2012-06-20 10:09,admin,admin
496,144504,5115,22828,6085,1,100,N,N,N,CP_Drtn,TT_Task,DT_FixedDUR2,RV_OK,TK_Complete,4229EPR30,Flow assurance report-Approval,,,,0,0,0,0,160,0,0,0,,2011-09-26 08:00,2011-11-03 00:00,2013-09-26 16:00,2013-09-26 16:00,,2012-06-02 00:00,2012-06-02 00:00,,,2011-09-26 08:00,2011-10-24 16:00,,,,,PT_Normal,,,,,6XAjMUtI2kiEOEPDz+FBng,,,,N,0,0,,,2012-06-19 11:46,2012-06-20 10:09,admin,admin
497,144505,5115,22828,6085,1,100,N,N,N,CP_Drtn,TT_Task,DT_FixedDUR2,RV_OK,TK_Complete,4229EPR50,Process simulation,,,,0,0,0,0,80,0,0,0,,2011-08-25 08:00,2011-09-11 16:00,2012-12-24 08:00,2012-12-24 08:00,,2012-06-02 00:00,2012-06-02 00:00,,,2011-08-25 08:00,2011-09-11 16:00,,,,,PT_Normal,,,,,Xq+0JFJaIU+w9iK3O4nfNg,9K5lbSWWSU+ZW7VGbG9JcQ,,,N,0,0,,,2012-06-19 11:46,2012-06-20 10:09,admin,admin
498,144506,5115,22842,6085,1,100,N,N,N,CP_Drtn,TT_Task,DT_FixedDUR2,RV_OK,TK_Complete,4229EPR310,RE-ISSUE T.E.R for Chemical injection,,,,0,0,0,0,120,0,0,0,,2012-01-01 08:00,2012-02-21 00:00,2012-12-24 08:00,2012-12-24 08:00,,2012-06-02 00:00,2012-06-02 00:00,,,2012-01-01 08:00,2012-01-19 16:00,,,,,PT_Normal,,,,,KYyfglTSX0qKcQ2kdy0Pjg,,,,N,0,0,,,2012-06-19 11:46,2012-06-20 10:09,admin,admin
499,144507,5115,22842,6085,1,0,N,N,N,CP_Drtn,TT_Task,DT_FixedDUR2,RV_OK,TK_Active,4229EPR250,V.P.R for chemical injection,,2480,264,160,0,0,0,400,0,0,0,,2012-04-01 00:00,,2013-09-01 08:00,2013-09-26 16:00,,2012-06-10 08:00,2012-07-05 16:00,2012-06-10 08:00,2012-07-05 16:00,2012-05-20 08:00,2012-07-26 16:00,,2013-09-01 08:00,2013-09-26 16:00,,PT_Normal,,,,,HwqEu0vG80i+cI6FvxW06Q,,,,N,0,0,,,2012-06-19 11:46,2012-06-20 09:59,admin,admin
500,144508,5115,22842,6085,1,0,N,N,N,CP_Drtn,TT_Task,DT_FixedDUR2,RV_OK,TK_Active,4229EPR240,V.P.R for P.S.V,,2320,264,320,0,0,0,320,0,0,0,,2012-04-17 00:00,,2013-08-04 08:00,2013-09-26 16:00,,2012-06-10 08:00,2012-08-02 16:00,2012-06-10 08:00,2012-08-02 16:00,2012-05-17 08:00,2012-07-11 16:00,,2013-08-04 08:00,2013-09-26 16:00,,PT_Normal,,,,,hXThEBhsmUyX7WRVYUYozA,,,,N,0,0,,,2012-06-19 11:46,2012-06-20 09:59,admin,admin
501,144509,5115,22842,6085,1,100,N,N,N,CP_Drtn,TT_Task,DT_FixedDUR2,RV_OK,TK_Complete,4229EPR70,T.E.R for Chemical injection,,,,0,0,0,0,160,0,0,0,,2011-09-19 08:00,2011-11-24 00:00,2012-12-24 08:00,2012-12-24 08:00,,2012-06-02 00:00,2012-06-02 00:00,,,2011-09-19 08:00,2011-10-17 16:00,,,,,PT_Normal,,,,,PYkDIZE5/ka2lNCtexlvXQ,,,,N,0,0,,,2012-06-19 11:46,2012-06-20 10:09,admin,admin
502,144510,5115,22842,6085,1,100,N,N,N,CP_Drtn,TT_Task,DT_FixedDUR2,RV_OK,TK_Complete,4229EPR150,MRP for Chemical injection,,,,0,0,0,0,24,0,0,0,,2012-03-25 00:00,2012-04-05 00:00,2012-12-24 08:00,2012-12-24 08:00,,2012-06-02 00:00,2012-06-02 00:00,,,2012-03-21 08:00,2012-03-25 16:00,,,,,PT_Normal,,,,,3sGB90JJlEiY19rggaCndQ,,,,N,0,0,,,2012-06-19 11:46,2012-06-20 10:09,admin,admin
503,144511,5115,22842,6085,1,100,N,N,N,CP_Drtn,TT_Task,DT_FixedDUR2,RV_OK,TK_Complete,4229EPR160,T.E.R for PSV,,,,0,0,0,0,160,0,0,0,,2011-11-17 00:00,2012-01-31 00:00,2012-12-24 08:00,2012-12-24 08:00,,2012-06-02 00:00,2012-06-02 00:00,,,2011-11-16 08:00,2011-12-13 16:00,,,,,PT_Normal,,,,,8yM5M1VVTkCkP69uvRmvUw,QZSem8n3HEqSrXo4nZ4rrA,,,N,0,0,,,2012-06-19 11:46,2012-06-20 10:09,admin,admin
504,144512,5115,22842,6085,1,100,N,N,N,CP_Drtn,TT_Task,DT_FixedDUR2,RV_OK,TK_Complete,4229EPR170,MRP for PSV,,,,0,0,0,0,40,0,0,0,,2012-04-05 00:00,2012-04-09 00:00,2012-12-24 08:00,2012-12-24 08:00,,2012-06-02 00:00,2012-06-02 00:00,,,2012-04-09 08:00,2012-04-15 16:00,,,,,PT_Normal,,,,,HIbnXWY1yUm36JJ3XpJ8aQ,ulMsewoMhEiApbF+oxOLEA,,,N,0,0,,,2012-06-19 11:46,2012-06-20 10:09,admin,admin
505,144513,5115,22842,6085,1,100,N,N,N,CP_Drtn,TT_Task,DT_FixedDUR2,RV_OK,TK_Complete,4229EPR60,Issue MRQ for PSV,,,,0,0,0,0,40,0,0,0,,2011-10-09 08:00,2011-10-19 00:00,2012-12-24 08:00,2012-12-24 08:00,,2012-06-02 00:00,2012-06-02 00:00,,,2011-10-09 08:00,2011-10-13 16:00,,,,,PT_Normal,,,,,/NbzKX6hjEGiCV6cNHZwyw,oARo+yhXM0mbfyeEpyVYrw,,,N,0,0,,,2012-06-19 11:46,2012-06-20 10:09,admin,admin
506,144514,5115,22842,6085,1,100,N,N,N,CP_Drtn,TT_Task,DT_FixedDUR2,RV_OK,TK_Complete,4229EPR10,Issue MRQ for Chemical injection,,,,0,0,0,0,56,0,0,0,,2011-08-16 08:00,2011-08-24 16:00,2012-12-24 08:00,2012-12-24 08:00,,2012-06-02 00:00,2012-06-02 00:00,,,2011-08-16 08:00,2011-08-24 16:00,,,,,PT_Normal,,,,,d/XF1ZJDT0ivr2RId1ubSA,,,,N,0,0,,,2012-06-19 11:46,2012-06-20 10:09,admin,admin
507,144515,5115,22834,6085,1,100,N,N,N,CP_Drtn,TT_Task,DT_FixedDUR2,RV_OK,TK_Complete,4229EPR90,C&E -Approval,,,,0,0,0,0,64,0,0,0,,2011-10-26 00:00,2011-11-23 16:00,2013-08-13 08:00,2013-08-13 08:00,,2012-06-02 00:00,2012-06-02 00:00,,,2011-10-30 08:00,2011-11-15 16:00,,,,,PT_Normal,,,,,kdqknXPB2kijg2DqwlH52A,,,,N,0,0,,,2012-06-19 11:46,2012-06-20 10:09,admin,admin
508,144516,5115,22834,6085,1,100,N,N,N,CP_Drtn,TT_Task,DT_FixedDUR2,RV_OK,TK_Complete,4229EPR130,C&E -Design,,,,0,0,0,0,64,0,0,0,,2011-12-01 00:00,2011-12-11 08:00,2013-08-13 08:00,2013-08-13 08:00,,2012-06-02 00:00,2012-06-02 00:00,,,2011-12-18 08:00,2011-12-27 16:00,,,,,PT_Normal,,,,,fayytOzVC0CztWDPxm/e/w,,,,N,0,0,,,2012-06-19 11:46,2012-06-20 10:09,admin,admin
509,144517,5115,22834,6085,1,0,N,N,N,CP_Drtn,TT_Task,DT_FixedDUR2,RV_OK,TK_NotStart,4229EPR200,C&E -Construction,,2328,0,64,0,0,0,64,0,0,0,,,,2013-08-26 08:00,2013-09-04 16:00,,2012-07-01 08:00,2012-07-10 16:00,2012-07-01 08:00,2012-07-10 16:00,2012-07-01 08:00,2012-07-10 16:00,,2013-08-26 08:00,2013-09-04 16:00,,PT_Normal,,,,,Kfq16PmaQk2FQNRCD1KcPQ,,,,N,0,0,,,2012-06-19 11:46,2012-06-20 09:59,admin,admin
510,144518,5115,22834,6085,1,100,N,N,N,CP_Drtn,TT_Task,DT_FixedDUR2,RV_OK,TK_Complete,4229EPR270,GUPCO approval on PFD's & material balance,,,,0,0,0,0,80,0,0,0,,2011-09-29 08:00,2011-10-24 00:00,2013-04-15 08:00,2013-04-15 08:00,,2012-06-02 00:00,2012-06-02 00:00,,,2011-09-29 08:00,2011-10-13 16:00,,,,,PT_Normal,,,,,QqBhGQJwGEGEyNL55KsOmQ,,,,N,0,0,,,2012-06-19 11:46,2012-06-20 10:09,admin,admin
511,144519,5115,22834,6085,1,100,N,N,N,CP_Drtn,TT_Task,DT_FixedDUR2,RV_OK,TK_Complete,4229EPR280,GUPCO approval on P&ID'S / Equipment list,,,,0,0,0,0,80,0,0,0,,2011-10-24 00:00,2011-11-22 00:00,2013-04-15 08:00,2013-04-15 08:00,,2012-06-02 00:00,2012-06-02 00:00,,,2011-10-30 08:00,2011-11-17 16:00,,,,,PT_Normal,,,,,JnkBD6nsYEWmSsrahN+oPw,1xx29x7gQw6UEWuqC1JfgA,,,N,0,0,,,2012-06-19 11:46,2012-06-20 10:09,admin,admin
512,144520,5115,22834,6085,1,100,N,N,N,CP_Drtn,TT_Task,DT_FixedDUR2,RV_OK,TK_Complete,4229EPR290,GUPCO approval on cause & effect,,,,0,0,0,0,80,0,0,0,,2011-11-24 00:00,2011-12-01 00:00,2013-08-13 08:00,2013-08-13 08:00,,2012-06-02 00:00,2012-06-02 00:00,,,2011-11-03 08:00,2011-11-23 16:00,,,,,PT_Normal,,,,,xgW4bu0EvUae6RCvQuXklg,,,,N,0,0,,,2012-06-19 11:46,2012-06-20 10:09,admin,admin
513,144521,5115,22834,6085,1,100,N,N,N,CP_Drtn,TT_Task,DT_FixedDUR2,RV_OK,TK_Complete,4229EPR20,Isuue PFD's / UFD's & material balance -Approval,,,,0,0,0,0,104,0,0,0,,2011-09-12 08:00,2011-09-27 00:00,2012-12-24 08:00,2012-12-24 08:00,,2012-06-02 00:00,2012-06-02 00:00,,,2011-09-12 08:00,2011-09-28 16:00,,,,,PT_Normal,,,,,d6xFQ5ezc0ySkPKr/VuPcA,4+V64hr8QGaVcGgwUXQVsA,,,N,0,0,,,2012-06-19 11:46,2012-06-20 10:09,admin,admin
514,144522,5115,22834,6085,1,100,N,N,N,CP_Drtn,TT_Task,DT_FixedDUR2,RV_OK,TK_Complete,4229EPR40,Issue P&ID'S / Equipment list-Approval,,,,0,0,0,0,80,0,0,0,,2011-09-28 00:00,2011-10-25 00:00,2013-03-07 08:00,2013-03-07 08:00,,2012-06-02 00:00,2012-06-02 00:00,,,2011-09-28 08:00,2011-10-12 16:00,,,,,PT_Normal,,,,,zQfWviOCTUGHGddHhEFZ8Q,bW1BefXsQ8qWdnGis0iRXg,,,N,0,0,,,2012-06-19 11:46,2012-06-20 10:09,admin,admin
515,144523,5115,22834,6085,1,0,N,N,N,CP_Drtn,TT_Task,DT_FixedDUR2,RV_OK,TK_NotStart,4229EPR180,Issue P&ID'S / Equipment list-Construction,,1088,0,120,0,0,0,120,0,0,0,,,,2012-12-31 08:00,2013-01-20 16:00,,2012-06-10 08:00,2012-06-28 16:00,2012-06-10 08:00,2012-06-28 16:00,2012-06-10 08:00,2012-06-28 16:00,,2012-12-31 08:00,2013-01-20 16:00,,PT_Normal,,,,,xzlRQMAzCUicNXiZiJez5w,0PYR8E0oSzmyuW10YXrt8A,,,N,0,0,,,2012-06-19 11:46,2012-06-20 09:59,admin,admin
516,144524,5115,22834,6085,1,100,N,N,N,CP_Drtn,TT_Task,DT_FixedDUR2,RV_OK,TK_Complete,4229EPR80,Isuue PFD's / UFD's  & material balance -Design,,,,0,0,0,0,56,0,0,0,,2011-10-25 00:00,2011-10-30 16:00,2013-04-15 08:00,2013-04-15 08:00,,2012-06-02 00:00,2012-06-02 00:00,,,2011-10-16 08:00,2011-10-24 16:00,,,,,PT_Normal,,,,,r5bxaDwDmEO8vpCfGk2CpA,ikkxFXoDQymD74BDpjE9Cw,,,N,0,0,,,2012-06-19 11:46,2012-06-20 10:09,admin,admin
517,144525,5115,22834,6085,1,100,N,N,N,CP_Drtn,TT_Task,DT_FixedDUR2,RV_OK,TK_Complete,4229EPR120,Issue P&ID'S / Equipment list-Design,,,,0,0,0,0,80,0,0,0,,2011-11-23 00:00,2011-12-06 00:00,2013-04-15 08:00,2013-04-15 08:00,,2012-06-02 00:00,2012-06-02 00:00,,,2011-11-14 08:00,2011-11-27 16:00,,,,,PT_Normal,,,,,kPB2nVZfOUOsIc8nlwt8Sg,y4kSxUB0QgmwrKOKSq45nQ,,,N,0,0,,,2012-06-19 11:46,2012-06-20 10:09,admin,admin
518,144526,5115,22834,6085,1,0,N,N,N,CP_Drtn,TT_Task,DT_FixedDUR2,RV_OK,TK_Active,4229EPR190,Isuue PFD's / UFD's & material balance -Construction,,2440,0,8,0,0,0,80,0,0,0,,2012-04-19 00:00,,2013-09-19 08:00,2013-09-19 16:00,2012-06-03 16:00,2012-07-05 08:00,2012-07-05 16:00,2012-07-05 08:00,2012-07-05 16:00,2012-06-20 08:00,2012-07-03 16:00,,2013-09-19 08:00,2013-09-19 16:00,,PT_Normal,,,,,g84/zhrd/kyy9uNk3lxuJw,,,,N,0,0,,,2012-06-19 11:46,2012-06-20 09:59,admin,admin
519,144527,5115,22834,6085,1,100,N,N,N,CP_Drtn,TT_Task,DT_FixedDUR2,RV_OK,TK_Complete,4229EPR320,Issue P&ID'S implementing HAZOP,,,,0,0,0,0,80,0,0,0,,2012-02-12 00:00,2012-03-12 00:00,2013-09-26 16:00,2013-09-26 16:00,,2012-06-02 00:00,2012-06-02 00:00,,,2012-03-18 08:00,2012-03-29 16:00,,,,,PT_Normal,,,,,puGlz0nL30KkUDKpG8mjtA,,,,N,0,0,,,2012-06-19 11:46,2012-06-20 10:09,admin,admin
520,144528,5115,22831,6085,1,0,N,N,N,CP_Drtn,TT_Task,DT_FixedDUR2,RV_OK,TK_NotStart,4229EPI280,Issue GA's / ISO's -construction(Second batch)- Final MTO,,1088,0,120,0,0,0,120,0,0,0,,,,2013-02-25 08:00,2013-03-17 16:00,,2012-08-05 08:00,2012-08-30 16:00,2012-08-05 08:00,2012-08-30 16:00,2012-08-05 08:00,2012-08-30 16:00,,2013-02-25 08:00,2013-03-17 16:00,,PT_Normal,,,,,3XzqJQIeVESxKUwU6kUfDQ,,,,N,0,0,,,2012-06-19 11:46,2012-06-20 09:59,admin,admin
521,144529,5115,22831,6085,1,100,N,N,N,CP_Drtn,TT_Task,DT_FixedDUR2,RV_OK,TK_Complete,4229EPI40,Issue plot plans-Approval,,,,0,0,0,0,80,0,0,0,,2011-10-26 00:00,2011-11-21 00:00,2013-03-07 08:00,2013-03-07 08:00,,2012-06-02 00:00,2012-06-02 00:00,,,2011-12-04 08:00,2011-12-15 16:00,,,,,PT_Normal,,,,,1oP7y/hArU+rVYEevpJQHg,ZsEQ0tICRLeOA9EICN0T6Q,,,N,0,0,,,2012-06-19 11:46,2012-06-20 10:09,admin,admin
522,144530,5115,22831,6085,1,100,N,N,N,CP_Drtn,TT_Task,DT_FixedDUR2,RV_OK,TK_Complete,4229EPI80,Issue plot plans-Design,,,,0,0,0,0,120,0,0,0,,2011-12-20 08:00,2012-01-05 16:00,2013-04-15 08:00,2013-04-15 08:00,,2012-06-02 00:00,2012-06-02 00:00,,,2011-12-20 08:00,2012-01-09 16:00,,,,,PT_Normal,,,,,nmU4MBBbzkibQ5Wjvyc9jA,cr+Ze/sDR+mGSVpxpwrL0A,,,N,0,0,,,2012-06-19 11:46,2012-06-20 10:09,admin,admin
523,144531,5115,22831,6085,1,0,N,N,N,CP_Drtn,TT_Task,DT_FixedDUR2,RV_OK,TK_NotStart,4229EPI160,Issue plot plans-Construction,,1088,0,120,0,0,0,120,0,0,0,,,,2013-01-21 08:00,2013-02-10 16:00,,2012-07-01 08:00,2012-07-19 16:00,2012-07-01 08:00,2012-07-19 16:00,2012-07-01 08:00,2012-07-19 16:00,,2013-01-21 08:00,2013-02-10 16:00,,PT_Normal,,,,,DPgSEWbS1EOH4rzSOjehuw,FxwlrL7cRzuyVKm0cFtT9w,,,N,0,0,,,2012-06-19 11:46,2012-06-20 09:59,admin,admin
524,144532,5115,22831,6085,1,0,N,N,N,CP_Drtn,TT_Task,DT_FixedDUR2,RV_OK,TK_NotStart,4229EPI190,Issue GA's / ISO's -construction(first batch),,1088,0,80,0,0,0,80,0,0,0,,,,2013-02-11 08:00,2013-02-24 16:00,,2012-07-22 08:00,2012-08-02 16:00,2012-07-22 08:00,2012-08-02 16:00,2012-07-22 08:00,2012-08-02 16:00,,2013-02-11 08:00,2013-02-24 16:00,,PT_Normal,,,,,pxCpc+eWNkualsiNqwewvw,1kARNwTqSjCYW0jNvbH2rQ,,,N,0,0,,,2012-06-19 11:46,2012-06-20 09:59,admin,admin
525,144533,5115,22831,6085,1,100,N,N,N,CP_Drtn,TT_Task,DT_FixedDUR2,RV_OK,TK_Complete,4229EPI100,Issue GA's -Approval,,,,0,0,0,0,224,0,0,0,,2011-12-22 00:00,2012-01-17 16:00,2013-09-24 08:00,2013-09-24 08:00,,2012-06-02 00:00,2012-06-02 00:00,,,2012-01-01 08:00,2012-02-08 16:00,,,,,PT_Normal,,,,,/8Jr+3V05EKoglbu8z8/cg,,,,N,0,0,,,2012-06-19 11:46,2012-06-20 10:09,admin,admin
526,144534,5115,22831,6085,1,100,N,N,N,CP_Drtn,TT_Task,DT_FixedDUR2,RV_OK,TK_Complete,4229EPI130,Issue GA's -Design,,,,0,0,0,0,160,0,0,0,,2012-02-02 00:00,2012-02-16 00:00,2013-04-15 08:00,2013-04-15 08:00,,2012-06-02 00:00,2012-06-02 00:00,,,2012-01-29 08:00,2012-02-23 16:00,,,,,PT_Normal,,,,,bmavt5FrO0yJT4RuchbfSg,,,,N,0,0,,,2012-06-19 11:46,2012-06-20 10:09,admin,admin
527,144535,5115,22831,6085,1,0,N,N,N,CP_Drtn,TT_Task,DT_FixedDUR2,RV_OK,TK_NotStart,4229EPI220,Piping supports list / MTO -IFC,,2120,0,80,0,0,0,80,0,0,0,,,,2013-09-08 08:00,2013-09-19 16:00,,2012-08-26 08:00,2012-09-06 16:00,2012-08-26 08:00,2012-09-06 16:00,2012-08-26 08:00,2012-09-06 16:00,,2013-09-08 08:00,2013-09-19 16:00,,PT_Normal,,,,,70+WrkM0akGazLjYtecxrQ,,,,N,0,0,,,2012-06-19 11:46,2012-06-20 09:59,admin,admin
528,144536,5115,22831,6085,1,100,N,N,N,CP_Drtn,TT_Task,DT_FixedDUR2,RV_OK,TK_Complete,4229EPI20,Line designation table -Approval,,,,0,0,0,0,48,0,0,0,,2011-10-24 00:00,2012-01-02 16:00,2013-09-26 16:00,2013-09-26 16:00,,2012-06-02 00:00,2012-06-02 00:00,,,2011-10-30 08:00,2011-11-13 16:00,,,,,PT_Normal,,,,,uHUTRIkjDU2zBKw/r8SUqg,,,,N,0,0,,,2012-06-19 11:46,2012-06-20 10:09,admin,admin
529,144537,5115,22831,6085,1,100,N,N,N,CP_Drtn,TT_Task,DT_FixedDUR2,RV_OK,TK_Complete,4229EPI120,Line designation table -Design,,,,0,0,0,0,64,0,0,0,,2012-01-10 08:00,2012-01-24 00:00,2013-09-26 16:00,2013-09-26 16:00,,2012-06-02 00:00,2012-06-02 00:00,,,2012-01-10 08:00,2012-01-19 16:00,,,,,PT_Normal,,,,,nqz8pUGBS06hrkWNowCKaw,,,,N,0,0,,,2012-06-19 11:46,2012-06-20 10:09,admin,admin
530,144538,5115,22831,6085,1,0,N,N,N,CP_Drtn,TT_Task,DT_FixedDUR2,RV_OK,TK_NotStart,4229EPI180,Line designation table -Construction,,2376,0,64,0,0,0,64,0,0,0,,,,2013-09-03 08:00,2013-09-12 16:00,,2012-07-01 08:00,2012-07-10 16:00,2012-07-01 08:00,2012-07-10 16:00,2012-07-01 08:00,2012-07-10 16:00,,2013-09-03 08:00,2013-09-12 16:00,,PT_Normal,,,,,AT1YxsUAJEWNfGn/GaeHUg,,,,N,0,0,,,2012-06-19 11:46,2012-06-20 09:59,admin,admin
531,144539,5115,22831,6085,1,0,N,N,N,CP_Drtn,TT_Task,DT_FixedDUR2,RV_OK,TK_NotStart,4229EPI170,Hydrotest maps & loops- Construction,,2312,1016,120,0,0,0,120,0,0,0,,,,2013-09-08 08:00,2013-09-26 16:00,,2012-07-16 08:00,2012-08-05 16:00,2012-07-16 08:00,2012-08-05 16:00,2012-07-16 08:00,2012-08-05 16:00,,2013-09-08 08:00,2013-09-26 16:00,,PT_Normal,,,,,pdajB1a1PEGhbFkR7F26cg,,,,N,0,0,,,2012-06-19 11:46,2012-06-20 09:59,admin,admin
532,144540,5115,22831,6085,1,0,N,N,N,CP_Drtn,TT_Task,DT_FixedDUR2,RV_OK,TK_NotStart,4229EPI230,Standard pipe supports -Construction,,2200,904,40,0,0,0,40,0,0,0,,,,2013-09-22 08:00,2013-09-26 16:00,,2012-08-26 08:00,2012-08-30 16:00,2012-08-26 08:00,2012-08-30 16:00,2012-08-26 08:00,2012-08-30 16:00,,2013-09-22 08:00,2013-09-26 16:00,,PT_Normal,,,,,HY8hNMN1LEGS4jpdlisNlw,,,,N,0,0,,,2012-06-19 11:46,2012-06-20 09:59,admin,admin
533,144541,5115,22831,6085,1,100,N,N,N,CP_Drtn,TT_Task,DT_FixedDUR2,RV_OK,TK_Complete,4229EPI240,Piping & Valves classes - Approval (Deleted),,,,0,0,0,0,40,0,0,0,,2011-10-24 00:00,2011-12-06 00:00,2013-09-26 16:00,2013-09-26 16:00,,2012-06-02 00:00,2012-06-02 00:00,,,2011-10-30 08:00,2011-11-03 16:00,,,,,PT_Normal,,,,,YdxzndvngUGMRGYxFhLGPw,,,,N,0,0,,,2012-06-19 11:46,2012-06-20 10:09,admin,admin
534,144542,5115,22831,6085,1,0,N,N,N,CP_Drtn,TT_Task,DT_FixedDUR2,RV_OK,TK_NotStart,4229EPI250,Critical line list-Construction,,2376,1080,80,0,0,0,80,0,0,0,,,,2013-09-15 08:00,2013-09-26 16:00,,2012-07-11 08:00,2012-07-24 16:00,2012-07-11 08:00,2012-07-24 16:00,2012-07-11 08:00,2012-07-24 16:00,,2013-09-15 08:00,2013-09-26 16:00,,PT_Normal,,,,,NsJy+9/dAkOoD7SBwTpUTw,,,,N,0,0,,,2012-06-19 11:46,2012-06-20 09:59,admin,admin
535,144543,5115,22831,6085,1,100,N,N,N,CP_Drtn,TT_Task,DT_FixedDUR2,RV_OK,TK_Complete,4229EPI260,Piping & Valves classes - Design,,,,0,0,0,0,40,0,0,0,,2011-10-24 00:00,2011-12-06 00:00,2013-09-26 16:00,2013-09-26 16:00,,2012-06-02 00:00,2012-06-02 00:00,,,2011-12-08 08:00,2011-12-14 16:00,,,,,PT_Normal,,,,,o8TgZonIBEi9JbpGMusA6w,,,,N,0,0,,,2012-06-19 11:46,2012-06-20 10:09,admin,admin
536,144544,5115,22831,6085,1,0,N,N,N,CP_Drtn,TT_Task,DT_FixedDUR2,RV_OK,TK_NotStart,4229EPI270,Piping & Valves classes - Construction,,2480,1184,40,0,0,0,40,0,0,0,,,,2013-09-22 08:00,2013-09-26 16:00,,2012-07-01 08:00,2012-07-05 16:00,2012-07-01 08:00,2012-07-05 16:00,2012-07-01 08:00,2012-07-05 16:00,,2013-09-22 08:00,2013-09-26 16:00,,PT_Normal,,,,,9+qRoIqAtEy/IVZ9z+e7CQ,,,,N,0,0,,,2012-06-19 11:46,2012-06-20 09:59,admin,admin
537,144545,5115,22846,6085,1,100,N,N,N,CP_Drtn,TT_Task,DT_FixedDUR2,RV_OK,TK_Complete,4229EPI310,Additional piping bulk MRQ,,,,0,0,0,0,120,0,0,0,,2012-04-15 00:00,2012-05-16 00:00,2013-02-05 08:00,2013-02-05 08:00,,2012-06-02 00:00,2012-06-02 00:00,,,2012-04-29 08:00,2012-05-17 16:00,,,,,PT_Normal,,,,,0DlXlAhhwUCiAcTI2TuYwQ,,,,N,0,0,,,2012-06-19 11:46,2012-06-20 10:09,admin,admin
538,144546,5115,22846,6085,1,0,N,N,N,CP_Drtn,TT_Task,DT_FixedDUR2,RV_OK,TK_NotStart,4229EPI320,Additional piping bulk T.E.R,,1344,0,160,0,0,0,160,0,0,0,,,,2013-02-14 08:00,2013-03-13 16:00,,2012-06-11 08:00,2012-07-08 16:00,2012-06-11 08:00,2012-07-08 16:00,2012-06-11 08:00,2012-07-08 16:00,,2013-02-14 08:00,2013-03-13 16:00,,PT_Normal,,,,,N8KwGWGKYUysfNmiBpbPkg,,,,N,0,0,,,2012-06-19 11:46,2012-06-20 09:59,admin,admin
539,144547,5115,22846,6085,1,0,N,N,N,CP_Drtn,TT_Task,DT_FixedDUR2,RV_OK,TK_NotStart,4229EPI330,Additional piping bulk MRP,,2200,0,40,0,0,0,40,0,0,0,,,,2013-09-11 08:00,2013-09-17 16:00,,2012-08-08 08:00,2012-08-14 16:00,2012-08-08 08:00,2012-08-14 16:00,2012-08-08 08:00,2012-08-14 16:00,,2013-09-11 08:00,2013-09-17 16:00,,PT_Normal,,,,,9BWAxSMF0ESV6wexpgJ4OQ,,,,N,0,0,,,2012-06-19 11:46,2012-06-20 09:59,admin,admin
540,144548,5115,22846,6085,1,100,N,N,N,CP_Drtn,TT_Task,DT_FixedDUR2,RV_OK,TK_Complete,4229EPI340,"Issue MRQ for Gate, Globe & butterfly valves",,,,0,0,0,0,8,0,0,0,,2011-11-24 00:00,2011-12-08 00:00,2013-09-26 16:00,2013-09-26 16:00,,2012-06-02 00:00,2012-06-02 00:00,,,2012-04-29 08:00,2012-04-29 16:00,,,,,PT_Normal,,,,,g5SbFkctcUuGWAWcRbwAnQ,,,,N,0,0,,,2012-06-19 11:46,2012-06-20 10:09,admin,admin
541,144549,5115,22846,6085,1,100,N,N,N,CP_Drtn,TT_Task,DT_FixedDUR2,RV_OK,TK_Complete,4229EPI60,Issue MRQ for Piping bulk,,,,0,0,0,0,64,0,0,0,,2011-11-15 00:00,2011-11-24 00:00,2013-06-13 08:00,2013-06-13 08:00,,2012-06-02 00:00,2012-06-02 00:00,,,2011-12-04 08:00,2011-12-13 16:00,,,,,PT_Normal,,,,,U7VgZq4N0kC1qbrodS/s+w,oARo+yhXM0mbfyeEpyVYrw,,,N,0,0,,,2012-06-19 11:46,2012-06-20 10:09,admin,admin
542,144550,5115,22846,6085,1,100,N,N,N,CP_Drtn,TT_Task,DT_FixedDUR2,RV_OK,TK_Complete,4229EPI110,"T.E.R for Piping Gate, Globe & Butterfly valves",,,,0,0,0,0,160,0,0,0,2012-01-12 00:00,2012-01-12 08:00,2012-02-08 00:00,2013-01-14 08:00,2013-01-14 08:00,,2012-06-02 00:00,2012-06-02 00:00,,,2012-01-12 08:00,2012-02-09 16:00,,,,CS_MSOA,PT_Normal,,,,,XJdU14xN3UKBdPH9i88+9A,+adQvSlUzkOZha6HG7fiRA,,,N,0,0,,,2012-06-19 11:46,2012-06-20 10:09,admin,admin
543,144551,5115,22846,6085,1,100,N,N,N,CP_Drtn,TT_Task,DT_FixedDUR2,RV_OK,TK_Complete,4229EPI150,"MRP for Piping Gate, Globe & Butterfly valves",,,,0,0,0,0,40,0,0,0,,2012-04-08 00:00,2012-04-12 00:00,2013-01-14 08:00,2013-01-14 08:00,,2012-06-02 00:00,2012-06-02 00:00,,,2012-04-12 08:00,2012-04-18 16:00,,,,,PT_Normal,,,,,MXVMduoLGUaUfqLMBcsmVQ,uCQ7t7XtkE2pu5tmschigw,,,N,0,0,,,2012-06-19 11:46,2012-06-20 10:09,admin,admin
544,144552,5115,22846,6085,1,100,N,N,N,CP_Drtn,TT_Task,DT_FixedDUR2,RV_OK,TK_Complete,4229EPI50,Issue MRQ for Ball valves,,,,0,0,0,0,40,0,0,0,,2011-11-24 00:00,2011-12-08 00:00,2013-05-26 08:00,2013-05-26 08:00,,2012-06-02 00:00,2012-06-02 00:00,,,2011-12-04 08:00,2011-12-08 16:00,,,,,PT_Normal,,,,,mXPSUNNrh0eo33eX+pn0Ug,fa+QQs2lrkWif6ZY5ZmI+Q,,,N,0,0,,,2012-06-19 11:46,2012-06-20 10:09,admin,admin
545,144553,5115,22846,6085,1,100,N,N,N,CP_Drtn,TT_Task,DT_FixedDUR2,RV_OK,TK_Complete,4229EPI10,Issue MRQ for L&R traps,,,,0,0,0,0,56,0,0,0,,2011-08-15 08:00,2011-08-23 16:00,2012-12-30 08:00,2012-12-30 08:00,,2012-06-02 00:00,2012-06-02 00:00,,,2011-08-15 08:00,2011-08-23 16:00,,,,,PT_Normal,,,,,MbwdUx5IbE6sW9t6uDG3AQ,,,,N,0,0,,,2012-06-19 11:46,2012-06-20 10:09,admin,admin
546,144554,5115,22846,6085,1,100,N,N,N,CP_Drtn,TT_Task,DT_FixedDUR2,RV_OK,TK_Complete,4229EPI30,T.E.R for L&R,,,,0,0,0,0,120,0,0,0,,2011-09-22 08:00,2011-12-04 00:00,2012-12-30 08:00,2012-12-30 08:00,,2012-06-02 00:00,2012-06-02 00:00,,,2011-09-22 08:00,2011-10-13 16:00,,,,,PT_Normal,,,,,HQgvJ5u59EG7eD0dzAoMNA,ErUDIEAHkEWZWIjcmb+Ptg,,,N,0,0,,,2012-06-19 11:46,2012-06-20 10:09,admin,admin
547,144555,5115,22846,6085,1,100,N,N,N,CP_Drtn,TT_Task,DT_FixedDUR2,RV_OK,TK_Complete,4229EPI70,MRP for L&R,,,,0,0,0,0,40,0,0,0,,2012-02-09 00:00,2012-02-20 00:00,2012-12-30 08:00,2012-12-30 08:00,,2012-06-02 00:00,2012-06-02 00:00,,,2012-03-04 08:00,2012-03-08 16:00,,,,,PT_Normal,,,,,2Fac9p+06EGbofh34Y1vgg,,,,N,0,0,,,2012-06-19 11:46,2012-06-20 10:09,admin,admin
548,144556,5115,22846,6085,1,0,N,N,N,CP_Drtn,TT_Task,DT_FixedDUR2,RV_OK,TK_Active,4229EPI210,V.P.R for launcher & receiver traps,,2032,296,640,0,0,0,640,0,0,0,,2012-03-27 00:00,,2013-06-09 08:00,2013-09-26 16:00,,2012-06-04 08:00,2012-09-30 16:00,2012-06-04 08:00,2012-09-30 16:00,2012-03-25 08:00,2012-07-12 16:00,,2013-06-09 08:00,2013-09-26 16:00,,PT_Normal,,,,,UxcUQQ4Ko0qVEPeUWRPv8A,,,,N,0,0,,,2012-06-19 11:46,2012-06-20 09:59,admin,admin
549,144557,5115,22846,6085,1,100,N,N,N,CP_Drtn,TT_Task,DT_FixedDUR2,RV_OK,TK_Complete,A1000,Thermal insulation specification,,,,0,0,0,0,40,0,0,0,,2011-11-21 00:00,2011-11-24 00:00,2013-09-26 16:00,2013-09-26 16:00,,2012-06-02 00:00,2012-06-02 00:00,,,2011-12-04 08:00,2011-12-08 16:00,,,,,PT_Normal,,,,,YmjvNTUVVUyTmfInyQXDMw,,,,N,0,0,,,2012-06-19 11:46,2012-06-20 10:09,admin,admin
550,144558,5115,22846,6085,1,100,N,N,N,CP_Drtn,TT_Task,DT_FixedDUR2,RV_OK,TK_Complete,A1010,Piping fabrication and erection specification,,,,0,0,0,0,40,0,0,0,,2011-11-21 00:00,2011-11-27 00:00,2013-09-26 16:00,2013-09-26 16:00,,2012-06-02 00:00,2012-06-02 00:00,,,2011-12-04 08:00,2011-12-08 16:00,,,,,PT_Normal,,,,,WI3e9MDS0EiNRBMJOdIodA,,,,N,0,0,,,2012-06-19 11:46,2012-06-20 10:09,admin,admin
551,144559,5115,22846,6085,1,100,N,N,N,CP_Drtn,TT_Task,DT_FixedDUR2,RV_OK,TK_Complete,A1020,Field test of piping specification.,,,,0,0,0,0,40,0,0,0,,2011-11-21 00:00,2011-11-24 00:00,2013-09-26 16:00,2013-09-26 16:00,,2012-06-02 00:00,2012-06-02 00:00,,,2011-12-11 08:00,2011-12-15 16:00,,,,,PT_Normal,,,,,f4c3T5is7ke9qzyGhyL96w,,,,N,0,0,,,2012-06-19 11:46,2012-06-20 10:09,admin,admin
552,144560,5115,22846,6085,1,100,N,N,N,CP_Drtn,TT_Task,DT_FixedDUR2,RV_OK,TK_Complete,4229EPI90,T.E.R for Piping bulk,,,,0,0,0,0,120,0,0,0,,2011-12-22 00:00,2012-01-26 00:00,2013-06-13 08:00,2013-06-13 08:00,,2012-06-02 00:00,2012-06-02 00:00,,,2011-12-13 08:00,2012-01-02 16:00,,,,,PT_Normal,,,,,V6gzJ8q4PU+k4z402V+igQ,QZSem8n3HEqSrXo4nZ4rrA,,,N,0,0,,,2012-06-19 11:46,2012-06-20 10:09,admin,admin
553,144561,5115,22846,6085,1,100,N,N,N,CP_Drtn,TT_Task,DT_FixedDUR2,RV_OK,TK_Complete,4229EPI140,MRP for Piping bulk,,,,0,0,0,0,40,0,0,0,,2012-03-19 00:00,2012-03-27 16:00,2013-06-13 08:00,2013-06-13 08:00,,2012-06-02 00:00,2012-06-02 00:00,,,2012-03-20 08:00,2012-03-26 16:00,,,,,PT_Normal,,,,,+SjY4LD/T0Kzd5nLpFp3Yw,ulMsewoMhEiApbF+oxOLEA,,,N,0,0,,,2012-06-19 11:46,2012-06-20 10:09,admin,admin
554,144562,5115,22846,6085,1,100,N,N,N,CP_Drtn,TT_Task,DT_FixedDUR2,RV_OK,TK_Complete,4229EPI290,T.E.R for Piping Ball Valves,,,,0,0,0,0,168,0,0,0,,2012-01-12 00:00,2012-02-13 00:00,2013-05-26 08:00,2013-05-26 08:00,,2012-06-02 00:00,2012-06-02 00:00,,,2012-03-04 08:00,2012-04-01 16:00,,,,,PT_Normal,,,,,TYYwlXYmqke6Vwe1E2E7Rg,,,,N,0,0,,,2012-06-19 11:46,2012-06-20 10:09,admin,admin
555,144563,5115,22846,6085,1,100,N,N,N,CP_Drtn,TT_Task,DT_FixedDUR2,RV_OK,TK_Complete,4229EPI300,MRP for Piping Ball Valves,,,,0,0,0,0,88,0,0,0,,2012-04-08 00:00,2012-04-12 00:00,2013-05-26 08:00,2013-05-26 08:00,,2012-06-02 00:00,2012-06-02 00:00,,,2012-04-12 08:00,2012-04-26 16:00,,,,,PT_Normal,,,,,w2QFIUNh3UyxHkYBMB63VA,,,,N,0,0,,,2012-06-19 11:46,2012-06-20 10:09,admin,admin
556,144564,5115,22833,6085,1,0,N,N,N,CP_Drtn,TT_Task,DT_FixedDUR2,RV_OK,TK_Active,4229EPI200,Stress analysis report,,2232,0,48,0,0,0,152,0,0,0,,2012-05-24 00:00,,2013-08-29 08:00,2013-09-05 16:00,2012-07-29 16:00,2012-07-22 08:00,2012-07-29 16:00,2012-07-22 08:00,2012-07-29 16:00,2012-07-03 08:00,2012-07-29 16:00,,2013-08-29 08:00,2013-09-05 16:00,,PT_Normal,,,,,v4WifE8QtE6dBeddTWmxWA,,,,N,0,0,,,2012-06-19 11:46,2012-06-20 09:59,admin,admin
557,144565,5115,22835,6085,1,100,N,N,N,CP_Drtn,TT_Task,DT_FixedDUR2,RV_OK,TK_Complete,4229EME30,Motor load list IFA,,,,0,0,0,0,40,0,0,0,,2011-10-24 00:00,2011-11-16 00:00,2013-09-15 08:00,2013-09-15 08:00,,2012-06-02 00:00,2012-06-02 00:00,,,2011-10-13 08:00,2011-10-19 16:00,,,,,PT_Normal,,,,,mFNrMWLlVUarbY1p3YQC2A,,,,N,0,0,,,2012-06-19 11:46,2012-06-20 10:09,admin,admin
558,144566,5115,22835,6085,1,0,N,N,N,CP_Drtn,TT_Task,DT_FixedDUR2,RV_OK,TK_NotStart,4229EME70,Final Motor load list,,2360,0,40,0,0,0,40,0,0,0,,,,2013-09-01 08:00,2013-09-05 16:00,,2012-07-01 08:00,2012-07-05 16:00,2012-07-01 08:00,2012-07-05 16:00,2012-07-01 08:00,2012-07-05 16:00,,2013-09-01 08:00,2013-09-05 16:00,,PT_Normal,,,,,qj2WzZWGc0W/SUyWCpY4QQ,,,,N,0,0,,,2012-06-19 11:46,2012-06-20 09:59,admin,admin
559,144567,5115,22835,6085,1,100,N,N,N,CP_Drtn,TT_Task,DT_FixedDUR2,RV_OK,TK_Complete,4229EME20,Material selection Guide IFA,,,,0,0,0,0,112,0,0,0,,2011-09-25 08:00,2011-10-27 00:00,2013-09-26 16:00,2013-09-26 16:00,,2012-06-02 00:00,2012-06-02 00:00,,,2011-09-25 08:00,2011-10-13 16:00,,,,,PT_Normal,,,,,WWaBzBu150ar0pLyD6XOUA,fS2yCILzQ1+s4v+Esy3IrA,,,N,0,0,,,2012-06-19 11:46,2012-06-20 10:09,admin,admin
560,144568,5115,22835,6085,1,100,N,N,N,CP_Drtn,TT_Task,DT_FixedDUR2,RV_OK,TK_Complete,4229EME40,Material selection Guide IFD,,,,0,0,0,0,40,0,0,0,2012-01-17 08:00,2012-01-17 08:00,2012-01-22 16:00,2013-09-26 16:00,2013-09-26 16:00,,2012-06-02 00:00,2012-06-02 00:00,,,2012-01-17 08:00,2012-01-23 16:00,,,,CS_MSO,PT_Normal,,,,,X1RQSYWTWUaui/eXszxs8w,,,,N,0,0,,,2012-06-19 11:46,2012-06-20 10:09,admin,admin
561,144569,5115,22850,6085,1,100,N,N,N,CP_Drtn,TT_Task,DT_FixedDUR2,RV_OK,TK_Complete,4229EME50,Material handling study IFA,,,,0,0,0,0,80,0,0,0,,2011-11-30 00:00,2012-01-08 00:00,2013-09-26 16:00,2013-09-26 16:00,,2012-06-02 00:00,2012-06-02 00:00,,,2011-12-04 08:00,2011-12-15 16:00,,,,,PT_Normal,,,,,1L8s42Lz5k+fjKP530eYWQ,,,,N,0,0,,,2012-06-19 11:46,2012-06-20 10:09,admin,admin
562,144570,5115,22850,6085,1,100,N,N,N,CP_Drtn,TT_Task,DT_FixedDUR2,RV_OK,TK_Complete,4229EME90,Final Material handling study,,,,0,0,0,0,48,0,0,0,,2012-01-29 08:00,2012-04-04 00:00,2013-09-26 16:00,2013-09-26 16:00,,2012-06-02 00:00,2012-06-02 00:00,,,2012-01-29 08:00,2012-02-05 16:00,,,,,PT_Normal,,,,,ealLksmm6kOWpYbxMwkEkA,,,,N,0,0,,,2012-06-19 11:46,2012-06-20 10:09,admin,admin
563,144571,5115,22850,6085,1,100,N,N,N,CP_Drtn,TT_Task,DT_FixedDUR2,RV_OK,TK_Complete,4229EME80,Material Selection philosophy report-Approval,,,,0,0,0,0,80,0,0,0,,2011-11-30 00:00,2012-01-29 00:00,2013-09-26 16:00,2013-09-26 16:00,,2012-06-02 00:00,2012-06-02 00:00,,,2011-12-18 08:00,2011-12-29 16:00,,,,,PT_Normal,,,,,0U55yie0Wk+KRtaoECx9Zw,,,,N,0,0,,,2012-06-19 11:46,2012-06-20 10:09,admin,admin
564,144572,5115,22850,6085,1,100,N,N,N,CP_Drtn,TT_Task,DT_FixedDUR2,RV_OK,TK_Complete,4229EME110,Material Selection philosophy report-Final,,,,0,0,0,0,80,0,0,0,,2012-03-04 08:00,2012-03-15 16:00,2013-09-26 16:00,2013-09-26 16:00,,2012-06-02 00:00,2012-06-02 00:00,,,2012-03-04 08:00,2012-03-15 16:00,,,,,PT_Normal,,,,,yjugvPw5lkaV1WLPMxagTQ,,,,N,0,0,,,2012-06-19 11:46,2012-06-20 10:09,admin,admin
565,144573,5115,22832,6085,1,100,N,N,N,CP_Drtn,TT_Task,DT_FixedDUR2,RV_OK,TK_Complete,4229EME170,MRQ for Progressive Cavity Pump,,,,0,0,0,0,40,0,0,0,,2012-03-07 00:00,2012-03-13 00:00,2013-01-23 08:00,2013-01-23 08:00,,2012-06-02 00:00,2012-06-02 00:00,,,2012-04-29 08:00,2012-05-03 16:00,,,,,PT_Normal,,,,,dUs1InVH70q5OwxVWMQnIg,,,,N,0,0,,,2012-06-19 11:46,2012-06-20 10:09,admin,admin
566,144574,5115,22832,6085,1,0,N,N,N,CP_Drtn,TT_Task,DT_FixedDUR2,RV_OK,TK_NotStart,4229EME190,V.P.R for Progressive Cavity pump,,1688,1688,800,0,0,0,800,0,0,0,,,,2013-05-12 08:00,2013-09-26 16:00,,2012-07-05 08:00,2012-12-05 16:00,2012-07-05 08:00,2012-12-05 16:00,2012-07-05 08:00,2012-12-05 16:00,,2013-05-12 08:00,2013-09-26 16:00,,PT_Normal,,,,,ahUC99ZAAUuFqJAHC5lfyg,,,,N,0,0,,,2012-06-19 11:46,2012-06-20 09:59,admin,admin
567,144575,5115,22832,6085,1,0,N,N,N,CP_Drtn,TT_Task,DT_FixedDUR2,RV_OK,TK_NotStart,4229EME200,MRP for Progressive Cavity pump,,2368,0,40,0,0,0,40,0,0,0,,,,2013-09-08 08:00,2013-09-12 16:00,,2012-07-05 08:00,2012-07-11 16:00,2012-07-05 08:00,2012-07-11 16:00,2012-07-05 08:00,2012-07-11 16:00,,2013-09-08 08:00,2013-09-12 16:00,,PT_Normal,,,,,8fYNhO55YUybIFZrHUskHg,,,,N,0,0,,,2012-06-19 11:46,2012-06-20 09:59,admin,admin
568,144576,5115,22832,6085,1,0,N,N,N,CP_Drtn,TT_Task,DT_FixedDUR2,RV_OK,TK_Active,4229EME180,T.E.R. for Progressive cavity pump,,1264,0,24,0,0,0,240,0,0,0,,2012-04-29 00:00,,2013-01-23 08:00,2013-01-27 16:00,2012-06-05 16:00,2012-06-03 08:00,2012-06-05 16:00,2012-06-03 08:00,2012-06-05 16:00,2012-05-02 08:00,2012-06-12 16:00,,2013-01-23 08:00,2013-01-27 16:00,,PT_Normal,,,,,ElylUTeKSkiCSTfYj/hJvg,,,,N,0,0,,,2012-06-19 11:46,2012-06-20 09:59,admin,admin
569,144577,5115,22832,6085,1,100,N,N,N,CP_Drtn,TT_Task,DT_FixedDUR2,RV_OK,TK_Complete,4229EME120,V.P.R for cathodic protection,,,,0,0,0,0,360,0,0,0,,2012-03-27 00:00,2012-05-22 00:00,2013-09-15 08:00,2013-09-15 08:00,,2012-06-07 16:00,2012-06-07 16:00,,,2012-04-08 08:00,2012-06-07 16:00,,,,,PT_Normal,,,,,f/S9c5clRUWFKT8SrCy1hg,,,,N,0,0,,,2012-06-19 11:46,2012-06-20 10:09,admin,admin
570,144578,5115,22832,6085,1,100,N,N,N,CP_Drtn,TT_Task,DT_FixedDUR2,RV_OK,TK_Complete,4229EME130,Data sheets for corrosion inhibitor pump-Purchase,,,,0,0,0,0,24,0,0,0,,2012-03-25 00:00,2012-04-04 00:00,2013-09-26 16:00,2013-09-26 16:00,,2012-06-02 00:00,2012-06-02 00:00,,,2012-04-01 08:00,2012-04-03 16:00,,,,,PT_Normal,,,,,25QETaD2pkqK37lxok/JzQ,,,,N,0,0,,,2012-06-19 11:46,2012-06-20 10:09,admin,admin
571,144579,5115,22832,6085,1,100,N,N,N,CP_Drtn,TT_Task,DT_FixedDUR2,RV_OK,TK_Complete,4229EME140,Data sheets for demulsifier injection pump-Purchase,,,,0,0,0,0,40,0,0,0,,2012-03-25 00:00,2012-03-27 00:00,2013-09-26 16:00,2013-09-26 16:00,,2012-06-02 00:00,2012-06-02 00:00,,,2012-04-05 08:00,2012-04-11 16:00,,,,,PT_Normal,,,,,U5P7smylp0KjamyOmuOFVQ,,,,N,0,0,,,2012-06-19 11:46,2012-06-20 10:09,admin,admin
572,144580,5115,22832,6085,1,100,N,N,N,CP_Drtn,TT_Task,DT_FixedDUR2,RV_OK,TK_Complete,4229EME150,Data sheets for scale inhibitor -Purchase,,,,0,0,0,0,40,0,0,0,,2012-03-25 00:00,2012-03-27 00:00,2013-09-26 16:00,2013-09-26 16:00,,2012-06-02 00:00,2012-06-02 00:00,,,2012-04-05 08:00,2012-04-11 16:00,,,,,PT_Normal,,,,,eRDLq1hoAU6Zg54mIO5IDw,,,,N,0,0,,,2012-06-19 11:46,2012-06-20 10:09,admin,admin
573,144581,5115,22832,6085,1,100,N,N,N,CP_Drtn,TT_Task,DT_FixedDUR2,RV_OK,TK_Complete,4229EME160,Specifications for positive displacement pumps,,,,0,0,0,0,40,0,0,0,,2012-03-25 00:00,2012-03-27 00:00,2013-09-26 16:00,2013-09-26 16:00,,2012-06-02 00:00,2012-06-02 00:00,,,2012-04-05 08:00,2012-04-11 16:00,,,,,PT_Normal,,,,,EZVBBBL7vkWKiA+BhFfqrA,,,,N,0,0,,,2012-06-19 11:46,2012-06-20 10:09,admin,admin
574,144582,5115,22832,6085,1,100,N,N,N,CP_Drtn,TT_Task,DT_FixedDUR2,RV_OK,TK_Complete,4229EME10,MRQ for cathodic protection,,,,0,0,0,0,120,0,0,0,,2011-09-28 08:00,2011-10-20 00:00,2013-08-06 08:00,2013-08-06 08:00,,2012-06-02 00:00,2012-06-02 00:00,,,2011-09-28 08:00,2011-10-19 16:00,,,,,PT_Normal,,,,,jIYsuSjZVkW/0jo05sxE4A,,,,N,0,0,,,2012-06-19 11:46,2012-06-20 10:09,admin,admin
575,144583,5115,22832,6085,1,100,N,N,N,CP_Drtn,TT_Task,DT_FixedDUR2,RV_OK,TK_Complete,4229EME60,T.E.R for cathodic protection,,,,0,0,0,0,120,0,0,0,,2011-11-24 00:00,2011-12-27 00:00,2013-08-06 08:00,2013-08-06 08:00,,2012-06-02 00:00,2012-06-02 00:00,,,2011-12-04 08:00,2011-12-22 16:00,,,,,PT_Normal,,,,,kDn6J2VFvES2/TIiPfPKTw,,,,N,0,0,,,2012-06-19 11:46,2012-06-20 10:09,admin,admin
576,144584,5115,22832,6085,1,100,N,N,N,CP_Drtn,TT_Task,DT_FixedDUR2,RV_OK,TK_Complete,4229EME100,MRP for cathodic protection,,,,0,0,0,0,40,0,0,0,,2012-02-26 00:00,2012-02-28 00:00,2013-08-06 08:00,2013-08-06 08:00,,2012-06-02 00:00,2012-06-02 00:00,,,2012-03-04 08:00,2012-03-08 16:00,,,,,PT_Normal,,,,,/BgYBC2MqUaHlwJ9zXmo1A,,,,N,0,0,,,2012-06-19 11:46,2012-06-20 10:09,admin,admin
577,144585,5115,22854,6085,1,0,N,N,N,CP_Drtn,TT_Task,DT_FixedDUR2,RV_OK,TK_NotStart,4229EOF590,Cable trays supports -Construction,,2160,864,80,0,0,0,80,0,0,0,,,,2013-09-15 08:00,2013-09-26 16:00,,2012-08-26 08:00,2012-09-06 16:00,2012-08-26 08:00,2012-09-06 16:00,2012-08-26 08:00,2012-09-06 16:00,,2013-09-15 08:00,2013-09-26 16:00,,PT_Normal,,,,,L1K8c0eexk+qZmJuQlvW7Q,,,,N,0,0,,,2012-06-19 11:46,2012-06-20 09:59,admin,admin
578,144586,5115,22854,6085,1,100,N,N,N,CP_Drtn,TT_Task,DT_FixedDUR2,RV_OK,TK_Complete,4229EOF200,Jacket appartenues Drawings-Approval,,,,0,0,0,0,160,0,0,0,,2011-12-14 08:00,2011-12-25 00:00,2013-09-15 08:00,2013-09-15 08:00,,2012-06-02 00:00,2012-06-02 00:00,,,2011-12-14 08:00,2012-01-10 16:00,,,,,PT_Normal,,,,,u/PKrMuN6kS2Miq0kJEr6A,,,,N,0,0,,,2012-06-19 11:46,2012-06-20 10:09,admin,admin
579,144587,5115,22854,6085,1,0,N,N,N,CP_Drtn,TT_Task,DT_FixedDUR2,RV_OK,TK_NotStart,4229EOF520,Jacket Appurtenances Drawings-Construction,,2568,0,112,0,0,0,112,0,0,0,,,,2013-09-09 08:00,2013-09-26 16:00,2012-06-20 16:00,2012-06-03 08:00,2012-06-20 16:00,2012-06-03 08:00,2012-06-20 16:00,2012-06-03 08:00,2012-06-20 16:00,,2013-09-09 08:00,2013-09-26 16:00,,PT_Normal,,,,,xTGkfzmSakSAJSB6quuL4w,,,,N,0,0,,,2012-06-19 11:46,2012-06-20 09:59,admin,admin
580,144588,5115,22854,6085,1,100,N,N,N,CP_Drtn,TT_Task,DT_FixedDUR2,RV_OK,TK_Complete,4229EOF310,Grating & handrails drawings-Approval,,,,0,0,0,0,120,0,0,0,,2012-01-04 00:00,2012-01-08 00:00,2013-09-26 16:00,2013-09-26 16:00,,2012-06-02 00:00,2012-06-02 00:00,,,2012-01-30 08:00,2012-02-19 16:00,,,,,PT_Normal,,,,,auNvRZZp80aSZEXKvACPVg,,,,N,0,0,,,2012-06-19 11:46,2012-06-20 10:09,admin,admin
581,144589,5115,22854,6085,1,100,N,N,N,CP_Drtn,TT_Task,DT_FixedDUR2,RV_OK,TK_Complete,4229EOF410,Grating & handrails drawings-Construction,,,,0,0,0,0,120,0,0,0,,2012-01-10 00:00,2012-01-19 00:00,2013-09-26 16:00,2013-09-26 16:00,,2012-06-02 00:00,2012-06-02 00:00,,,2012-02-27 08:00,2012-03-18 16:00,,,,,PT_Normal,,,,,IkcjuXQ/tk2vnJjSSaahVQ,,,,N,0,0,,,2012-06-19 11:46,2012-06-20 10:09,admin,admin
582,144590,5115,22854,6085,1,0,N,N,N,CP_Drtn,TT_Task,DT_FixedDUR2,RV_OK,TK_NotStart,4229EOF580,Piping supports -Construction,,2232,936,40,0,0,0,40,0,0,0,,,,2013-09-22 08:00,2013-09-26 16:00,,2012-08-13 08:00,2012-08-26 16:00,2012-08-13 08:00,2012-08-26 16:00,2012-08-13 08:00,2012-08-26 16:00,,2013-09-22 08:00,2013-09-26 16:00,,PT_Normal,,,,,Y/mei/y9lkWL2O5gTdPnOg,,,,N,0,0,,,2012-06-19 11:46,2012-06-20 09:59,admin,admin
583,144591,5115,22854,6085,1,0,N,N,N,CP_Drtn,TT_Task,DT_FixedDUR2,RV_OK,TK_NotStart,4229EOF360,Piping supports -Approval,,2232,0,80,0,0,0,80,0,0,0,,,,2013-09-08 08:00,2013-09-19 16:00,,2012-07-30 08:00,2012-08-12 16:00,2012-07-30 08:00,2012-08-12 16:00,2012-07-30 08:00,2012-08-12 16:00,,2013-09-08 08:00,2013-09-19 16:00,,PT_Normal,,,,,Bx+cUNEwrE2mKoER7YRLaw,,,,N,0,0,,,2012-06-19 11:46,2012-06-20 09:59,admin,admin
584,144592,5115,22854,6085,1,100,N,N,N,CP_Drtn,TT_Task,DT_FixedDUR2,RV_OK,TK_Complete,4229EOF120,General drawings-Approval,,,,0,0,0,0,200,0,0,0,,2011-10-19 08:00,2011-11-22 00:00,2013-09-26 16:00,2013-09-26 16:00,,2012-06-02 00:00,2012-06-02 00:00,,,2011-10-19 08:00,2011-11-29 16:00,,,,,PT_Normal,,,,,sYK4IGQ+9UGO2yH3K3FF7A,pHZmOGuMSlyGsG/c/oK2Fg,,,N,0,0,,,2012-06-19 11:46,2012-06-20 10:09,admin,admin
585,144593,5115,22854,6085,1,100,N,N,N,CP_Drtn,TT_Task,DT_FixedDUR2,RV_OK,TK_Complete,4229EOF270,Genral Drawings- Construction,,,,0,0,0,0,160,0,0,0,,2011-12-07 00:00,2011-12-29 00:00,2013-09-26 16:00,2013-09-26 16:00,,2012-06-02 00:00,2012-06-02 00:00,,,2012-01-01 08:00,2012-01-29 16:00,,,,,PT_Normal,,,,,53K9mfBRrE2kAdjFlza6sw,,,,N,0,0,,,2012-06-19 11:46,2012-06-20 10:09,admin,admin
586,144594,5115,22854,6085,1,100,N,N,N,CP_Drtn,TT_Task,DT_FixedDUR2,RV_OK,TK_Complete,4229EOF130,Deck primary steel Drawings- Approval,,,,0,0,0,0,160,0,0,0,,2011-11-22 00:00,2011-12-29 00:00,2013-08-04 08:00,2013-08-04 08:00,,2012-06-02 00:00,2012-06-02 00:00,,,2011-12-04 08:00,2011-12-29 16:00,,,,,PT_Normal,,,,,bdCmm+4z/065KmcvhWCIvQ,r1vh6DQ+T+Sw8D8Gqb1mPA,,,N,0,0,,,2012-06-19 11:46,2012-06-20 10:09,admin,admin
587,144595,5115,22854,6085,1,100,N,N,N,CP_Drtn,TT_Task,DT_FixedDUR2,RV_OK,TK_Complete,4229EOF10,Jacket primary steel  Drawings-Approval,,,,0,0,0,0,200,0,0,0,,2011-10-19 08:00,2011-11-22 00:00,2013-08-04 08:00,2013-08-04 08:00,,2012-06-02 00:00,2012-06-02 00:00,,,2011-10-19 08:00,2011-11-29 16:00,,,,,PT_Normal,,,,,N5v6yY+PDEKtQnn29tF4GQ,5t6WlUnKSuqJQ8zryJtE8g,,,N,0,0,,,2012-06-19 11:46,2012-06-20 10:09,admin,admin
588,144596,5115,22854,6085,1,100,N,N,N,CP_Drtn,TT_Task,DT_FixedDUR2,RV_OK,TK_Complete,4229EOF260,Jacket primary steel  Drawings- Construction,,,,0,0,0,0,160,0,0,0,,2011-12-15 00:00,2011-12-29 00:00,2013-09-09 08:00,2013-09-09 08:00,,2012-06-02 00:00,2012-06-02 00:00,,,2012-01-01 08:00,2012-01-29 16:00,,,,,PT_Normal,,,,,SpbdD2Ms2ECewbx0T7jg8w,72Fq/cOZRx2mimvebPGxUw,,,N,0,0,,,2012-06-19 11:46,2012-06-20 10:09,admin,admin
589,144597,5115,22854,6085,1,0,N,N,N,CP_Drtn,TT_Task,DT_FixedDUR2,RV_OK,TK_Active,4229EOF550,Deck primary steel Drawings- Construction,,2080,0,120,0,0,0,120,0,0,0,,2012-05-20 00:00,,2013-08-04 08:00,2013-08-22 16:00,,2012-07-22 08:00,2012-08-09 16:00,2012-07-22 08:00,2012-08-09 16:00,2012-06-18 08:00,2012-07-08 16:00,,2013-08-04 08:00,2013-08-22 16:00,,PT_Normal,,,,,4D0viQeyOEa6blugfj+Sig,cKAHJrH+Ry+KoWBkOlxCOw,,,N,0,0,,,2012-06-19 11:46,2012-06-20 09:59,admin,admin
590,144598,5115,22854,6085,1,100,N,N,N,CP_Drtn,TT_Task,DT_FixedDUR2,RV_OK,TK_Complete,4229EOF290,Stairs drawings-Approval,,,,0,0,0,0,80,0,0,0,,2012-01-01 08:00,2012-02-20 00:00,2013-09-15 08:00,2013-09-15 08:00,,2012-06-02 00:00,2012-06-02 00:00,,,2012-01-01 08:00,2012-01-12 16:00,,,,,PT_Normal,,,,,yoI+o+YoiEGLHOtZ6xZiHA,,,,N,0,0,,,2012-06-19 11:46,2012-06-20 10:09,admin,admin
591,144599,5115,22854,6085,1,0,N,N,N,CP_Drtn,TT_Task,DT_FixedDUR2,RV_OK,TK_NotStart,4229EOF390,Stairs drawings-Construction,,2320,1024,80,0,0,0,80,0,0,0,,,,2013-09-15 08:00,2013-09-26 16:00,,2012-07-22 08:00,2012-08-02 16:00,2012-07-22 08:00,2012-08-02 16:00,2012-07-22 08:00,2012-08-02 16:00,,2013-09-15 08:00,2013-09-26 16:00,,PT_Normal,,,,,jNwWWg5G2kmJ5i/dq9/SaA,,,,N,0,0,,,2012-06-19 11:46,2012-06-20 09:59,admin,admin
592,144600,5115,22854,6085,1,0,N,N,N,CP_Drtn,TT_Task,DT_FixedDUR2,RV_OK,TK_NotStart,4229EOF600,Equipment fixation deatils-Construction,,2296,1000,80,0,0,0,80,0,0,0,,,,2013-09-15 08:00,2013-09-26 16:00,,2012-07-25 08:00,2012-08-07 16:00,2012-07-25 08:00,2012-08-07 16:00,2012-07-25 08:00,2012-08-07 16:00,,2013-09-15 08:00,2013-09-26 16:00,,PT_Normal,,,,,9cOF3RKCvUCZzCh8GlXg4g,,,,N,0,0,,,2012-06-19 11:46,2012-06-20 09:59,admin,admin
593,144601,5115,22854,6085,1,0,N,N,N,CP_Drtn,TT_Task,DT_FixedDUR2,RV_OK,TK_Active,4229EOF280,Cable trays supports -Approval,,2448,0,112,0,0,0,96,0,0,0,2012-05-15 08:00,2012-01-29 00:00,,2013-08-19 08:00,2013-09-05 16:00,2012-06-20 16:00,2012-06-03 08:00,2012-06-20 16:00,2012-06-03 08:00,2012-06-20 16:00,2012-05-15 08:00,2012-05-30 16:00,,2013-08-19 08:00,2013-09-05 16:00,CS_MSO,PT_Normal,,,,,q9/vPjRaDEyQBbkXdKDIvw,,,,N,0,0,,,2012-06-19 11:46,2012-06-20 09:59,admin,admin
594,144602,5115,22854,6085,1,100,N,N,N,CP_Drtn,TT_Task,DT_FixedDUR2,RV_OK,TK_Complete,4229EOF170,Jacket secondary steel  & piles Drawings-Approval,,,,0,0,0,0,120,0,0,0,,2011-11-23 00:00,2011-12-15 00:00,2013-09-09 08:00,2013-09-09 08:00,,2012-06-02 00:00,2012-06-02 00:00,,,2011-12-04 08:00,2011-12-22 16:00,,,,,PT_Normal,,,,,c9+pCQle90iCA7AQXDfSOw,,,,N,0,0,,,2012-06-19 11:46,2012-06-20 10:09,admin,admin
595,144603,5115,22854,6085,1,100,N,N,N,CP_Drtn,TT_Task,DT_FixedDUR2,RV_OK,TK_Complete,4229EOF230,Deck secondary steel Drawings- Approval,,,,0,0,0,0,160,0,0,0,,2011-12-14 08:00,2012-01-08 00:00,2013-09-26 16:00,2013-09-26 16:00,,2012-06-02 00:00,2012-06-02 00:00,,,2011-12-14 08:00,2012-01-10 16:00,,,,,PT_Normal,,,,,e15H60b/G0WPNC040EYJyw,,,,N,0,0,,,2012-06-19 11:46,2012-06-20 10:09,admin,admin
596,144604,5115,22854,6085,1,100,N,N,N,CP_Drtn,TT_Task,DT_FixedDUR2,RV_OK,TK_Complete,4229EOF350,Jacket secondary steel  & piles Drawings- Construction,,,,0,0,0,0,120,0,0,0,,2012-01-15 00:00,2012-02-28 00:00,2013-09-09 08:00,2013-09-09 08:00,,2012-06-02 00:00,2012-06-02 00:00,,,2012-01-29 08:00,2012-02-16 16:00,,,,,PT_Normal,,,,,C3YLakUwA0eUgYs0zOJ+0A,,,,N,0,0,,,2012-06-19 11:46,2012-06-20 10:09,admin,admin
597,144605,5115,22854,6085,1,0,N,N,N,CP_Drtn,TT_Task,DT_FixedDUR2,RV_OK,TK_Active,4229EOF560,Deck secondary  steel Drawings- Construction,,2080,0,120,0,0,0,120,0,0,0,,2012-05-20 00:00,,2013-08-25 08:00,2013-09-12 16:00,,2012-08-12 08:00,2012-09-06 16:00,2012-08-12 08:00,2012-09-06 16:00,2012-07-09 08:00,2012-07-29 16:00,,2013-08-25 08:00,2013-09-12 16:00,,PT_Normal,,,,,RSN68m277EimXMkcjFzW2A,,,,N,0,0,,,2012-06-19 11:46,2012-06-20 09:59,admin,admin
598,144606,5115,22836,6085,1,0,N,N,N,CP_Drtn,TT_Task,DT_FixedDUR2,RV_OK,TK_NotStart,4229EOF610,Topside weight control report- Final,,2096,0.016667,64,0,0,0,64,0,0,0,,,,2013-09-17 08:00,2013-09-26 16:00,,2012-09-09 08:00,2012-09-18 16:00,2012-09-09 08:00,2012-09-18 16:00,2012-09-09 08:00,2012-09-18 16:00,,2013-09-17 08:00,2013-09-26 16:00,,PT_Normal,,,,,CHeSYD5Hj0G+tesYmySAMQ,,,,N,0,0,,,2012-06-19 11:46,2012-06-20 10:08,admin,admin
599,144607,5115,22836,6085,1,0,N,N,N,CP_Drtn,TT_Task,DT_FixedDUR2,RV_OK,TK_NotStart,4229EOF570,Constructability study report,,2175.983333,879.983333,80,0,0,0,80,0,0,0,,,,2013-09-15 08:00,2013-09-26 16:00,,2012-08-15 08:01,2012-09-05 08:01,2012-08-15 08:01,2012-09-05 08:01,2012-08-15 08:01,2012-09-05 08:01,,2013-09-15 08:00,2013-09-26 16:00,,PT_Normal,,,,,3jlXFxHEr0azi11u3VDDvw,,,,N,0,0,,,2012-06-19 11:46,2012-06-20 10:08,admin,admin
600,144608,5115,22836,6085,1,100,N,N,N,CP_Drtn,TT_Task,DT_FixedDUR2,RV_OK,TK_Complete,4229EOF20,In-place analysis design report-Approval,,,,0,0,0,0,576,0,0,0,,2011-10-19 08:00,2012-02-16 00:00,2013-09-15 08:00,2013-09-15 08:00,,2012-06-02 00:00,2012-06-02 00:00,,,2011-10-19 08:00,2012-02-05 16:00,,,,,PT_Normal,,,,,bLyrGC3tIE+ZBYptmeXnBw,,,,N,0,0,,,2012-06-19 11:46,2012-06-20 10:09,admin,admin
601,144609,5115,22836,6085,1,0,N,N,N,CP_Drtn,TT_Task,DT_FixedDUR2,RV_OK,TK_NotStart,4229EOF420,In-place analysis design report-Final,,2240,0,80,0,0,0,80,0,0,0,,,,2013-09-15 08:00,2013-09-26 16:00,2012-03-21 16:00,2012-08-05 08:00,2012-08-16 16:00,2012-08-05 08:00,2012-08-16 16:00,2012-08-05 08:00,2012-08-16 16:00,,2013-09-15 08:00,2013-09-26 16:00,,PT_Normal,,,,,UxeDpURmfkmHjdl2cXbXKg,,,,N,0,0,,,2012-06-19 11:46,2012-06-20 09:59,admin,admin
602,144610,5115,22836,6085,1,100,N,N,N,CP_Drtn,TT_Task,DT_FixedDUR2,RV_OK,TK_Complete,4229EOF30,Earthquake analysis design report-Approval,,,,0,0,0,0,576,0,0,0,,2011-10-19 08:00,2012-02-28 00:00,2013-09-26 16:00,2013-09-26 16:00,,2012-06-02 00:00,2012-06-02 00:00,,,2011-10-19 08:00,2012-02-05 16:00,,,,,PT_Normal,,,,,YxIDGIqGbEa90XNRVHhfPg,,,,N,0,0,,,2012-06-19 11:46,2012-06-20 10:09,admin,admin
603,144611,5115,22836,6085,1,0,N,N,N,CP_Drtn,TT_Task,DT_FixedDUR2,RV_OK,TK_NotStart,4229EOF440,Earthquake analysis design report-Final,,2200,0,80,0,0,0,80,0,0,0,,,,2013-09-15 08:00,2013-09-26 16:00,2012-03-21 16:00,2012-08-12 08:00,2012-08-30 16:00,2012-08-12 08:00,2012-08-30 16:00,2012-08-12 08:00,2012-08-30 16:00,,2013-09-15 08:00,2013-09-26 16:00,,PT_Normal,,,,,QnwccoeWoUadu4qz+hpKwg,,,,N,0,0,,,2012-06-19 11:46,2012-06-20 09:59,admin,admin
604,144612,5115,22836,6085,1,100,N,N,N,CP_Drtn,TT_Task,DT_FixedDUR2,RV_OK,TK_Complete,4229EOF140,Deck loadout analysis report-Approval,,,,0,0,0,0,560,0,0,0,,2012-02-26 00:00,2012-02-26 00:00,2013-09-15 08:00,2013-09-15 08:00,,2012-06-02 00:00,2012-06-02 00:00,,,2011-10-27 08:00,2012-02-09 16:00,,,,,PT_Normal,,,,,TliobvTuYUOrQ1Ul7A6CrQ,,,,N,0,0,,,2012-06-19 11:46,2012-06-20 10:09,admin,admin
605,144613,5115,22836,6085,1,0,N,N,N,CP_Drtn,TT_Task,DT_FixedDUR2,RV_OK,TK_NotStart,4229EOF490,Deck loadout analysis report-Final,,2200,0,80,0,0,0,80,0,0,0,,,,2013-09-15 08:00,2013-09-26 16:00,2012-03-21 16:00,2012-08-12 08:00,2012-08-30 16:00,2012-08-12 08:00,2012-08-30 16:00,2012-08-12 08:00,2012-08-30 16:00,,2013-09-15 08:00,2013-09-26 16:00,,PT_Normal,,,,,NG/6ItRyDketHRxiIgToQA,,,,N,0,0,,,2012-06-19 11:46,2012-06-20 09:59,admin,admin
606,144614,5115,22836,6085,1,100,N,N,N,CP_Drtn,TT_Task,DT_FixedDUR2,RV_OK,TK_Complete,4229EOF150,Deck transportation analysis report-Approval,,,,0,0,0,0,560,0,0,0,,2011-10-27 08:00,2012-02-16 00:00,2013-09-15 08:00,2013-09-15 08:00,,2012-06-02 00:00,2012-06-02 00:00,,,2011-10-27 08:00,2012-02-09 16:00,,,,,PT_Normal,,,,,zpebxEVK+EiU862luoP0yw,,,,N,0,0,,,2012-06-19 11:46,2012-06-20 10:09,admin,admin
607,144615,5115,22836,6085,1,0,N,N,N,CP_Drtn,TT_Task,DT_FixedDUR2,RV_OK,TK_NotStart,4229EOF500,Deck transportation analysis report-Final,,2240,0,80,0,0,0,80,0,0,0,,,,2013-09-15 08:00,2013-09-26 16:00,2012-03-21 16:00,2012-08-05 08:00,2012-08-16 16:00,2012-08-05 08:00,2012-08-16 16:00,2012-08-05 08:00,2012-08-16 16:00,,2013-09-15 08:00,2013-09-26 16:00,,PT_Normal,,,,,YqtCI+8byESam3JUFGAndA,,,,N,0,0,,,2012-06-19 11:46,2012-06-20 09:59,admin,admin
608,144616,5115,22836,6085,1,100,N,N,N,CP_Drtn,TT_Task,DT_FixedDUR2,RV_OK,TK_Complete,4229EOF160,Deck lifting analysis design report-Approval,,,,0,0,0,0,560,0,0,0,,2011-10-27 08:00,2012-03-08 16:00,2013-09-26 16:00,2013-09-26 16:00,,2012-06-02 00:00,2012-06-02 00:00,,,2011-10-27 08:00,2012-02-09 16:00,,,,,PT_Normal,,,,,ID4+mEMwl0SrzucQws53Qg,,,,N,0,0,,,2012-06-19 11:46,2012-06-20 10:09,admin,admin
609,144617,5115,22836,6085,1,0,N,N,N,CP_Drtn,TT_Task,DT_FixedDUR2,RV_OK,TK_NotStart,4229EOF510,Deck lifting analysis design report-Final,,2240,944,80,0,0,0,80,0,0,0,,,,2013-09-15 08:00,2013-09-26 16:00,,2012-08-05 08:00,2012-08-16 16:00,2012-08-05 08:00,2012-08-16 16:00,2012-08-05 08:00,2012-08-16 16:00,,2013-09-15 08:00,2013-09-26 16:00,,PT_Normal,,,,,7jt82NzlvEWXkdSALWZuXQ,,,,N,0,0,,,2012-06-19 11:46,2012-06-20 09:59,admin,admin
610,144618,5115,22836,6085,1,0,N,N,N,CP_Drtn,TT_Task,DT_FixedDUR2,RV_OK,TK_Active,4229EOF240,Deck miscellaneous design report-Approval,,2232,0,0,0,0,0,440,0,0,0,,2011-12-14 00:00,,2013-09-26 16:00,2013-09-26 16:00,2012-03-29 16:00,2012-08-27 08:00,2012-08-27 08:00,2012-08-27 08:00,2012-08-27 08:00,2012-01-01 08:00,2012-03-18 16:00,,2013-09-26 16:00,2013-09-26 16:00,,PT_Normal,,,,,mD83eokqq0W4GyE8AI190Q,,,,N,0,0,,,2012-06-19 11:46,2012-06-20 09:59,admin,admin
611,144619,5115,22836,6085,1,0,N,N,N,CP_Drtn,TT_Task,DT_FixedDUR2,RV_OK,TK_NotStart,4229EOF530,Deck miscellaneous design report-Final,,2200,904,80,0,0,0,80,0,0,0,,,,2013-09-15 08:00,2013-09-26 16:00,,2012-08-12 08:00,2012-08-30 16:00,2012-08-12 08:00,2012-08-30 16:00,2012-08-12 08:00,2012-08-30 16:00,,2013-09-15 08:00,2013-09-26 16:00,,PT_Normal,,,,,qCIOh4A460KGc7E0f4W7pQ,,,,N,0,0,,,2012-06-19 11:46,2012-06-20 09:59,admin,admin
612,144620,5115,22836,6085,1,100,N,N,N,CP_Drtn,TT_Task,DT_FixedDUR2,RV_OK,TK_Complete,4229EOF40,Fatigue analysis design report-Approval,,,,0,0,0,0,616,0,0,0,,2011-10-19 08:00,2012-02-09 00:00,2013-09-15 08:00,2013-09-15 08:00,,2012-06-02 00:00,2012-06-02 00:00,,,2011-10-19 08:00,2012-02-12 16:00,,,,,PT_Normal,,,,,W3l3bke2Jk6+Txi+0Vk0Pw,,,,N,0,0,,,2012-06-19 11:46,2012-06-20 10:09,admin,admin
613,144621,5115,22836,6085,1,100,N,N,N,CP_Drtn,TT_Task,DT_FixedDUR2,RV_OK,TK_Complete,4229EOF450,Fatigue analysis design report-Final,,,,0,0,0,0,80,0,0,0,,2012-02-21 00:00,2012-03-08 16:00,2013-09-26 16:00,2013-09-26 16:00,,2012-06-02 00:00,2012-06-02 00:00,,,2012-04-02 08:00,2012-04-15 16:00,,,,,PT_Normal,,,,,nGMqMACtJ0OBY1Zz1OE2Qw,,,,N,0,0,,,2012-06-19 11:46,2012-06-20 10:09,admin,admin
614,144622,5115,22836,6085,1,100,N,N,N,CP_Drtn,TT_Task,DT_FixedDUR2,RV_OK,TK_Complete,4229EOF50,Boat impact design analysis report-Approval,,,,0,0,0,0,616,0,0,0,,2011-10-19 08:00,2012-02-26 00:00,2013-09-26 16:00,2013-09-26 16:00,,2012-06-02 00:00,2012-06-02 00:00,,,2011-10-19 08:00,2012-02-12 16:00,,,,,PT_Normal,,,,,Yq/CTLNgoUScRJsZxcr0ig,,,,N,0,0,,,2012-06-19 11:46,2012-06-20 10:09,admin,admin
615,144623,5115,22836,6085,1,100,N,N,N,CP_Drtn,TT_Task,DT_FixedDUR2,RV_OK,TK_Complete,4229EOF460,Boat impact design analysis report-Final,,,,0,0,0,0,80,0,0,0,,2012-03-11 08:00,2012-03-26 00:00,2013-09-26 16:00,2013-09-26 16:00,,2012-06-02 00:00,2012-06-02 00:00,,,2012-03-11 08:00,2012-03-22 16:00,,,,,PT_Normal,,,,,XX889ejH1kqrC77hpkmHnw,,,,N,0,0,,,2012-06-19 11:46,2012-06-20 10:09,admin,admin
616,144624,5115,22836,6085,1,100,N,N,N,CP_Drtn,TT_Task,DT_FixedDUR2,RV_OK,TK_Complete,4229EOF60,Jacket loadout analysis design report-Approval,,,,0,0,0,0,416,0,0,0,,2011-10-19 08:00,2012-01-22 00:00,2013-09-26 16:00,2013-09-26 16:00,,2012-06-02 00:00,2012-06-02 00:00,,,2011-10-19 08:00,2012-01-05 16:00,,,,,PT_Normal,,,,,b5WWz2ugekGAN+1PUNtzYw,,,,N,0,0,,,2012-06-19 11:46,2012-06-20 10:09,admin,admin
617,144625,5115,22836,6085,1,100,N,N,N,CP_Drtn,TT_Task,DT_FixedDUR2,RV_OK,TK_Complete,4229EOF320,Jacket loadout analysis design report-Final,,,,0,0,0,0,80,0,0,0,2012-01-30 00:00,2012-02-07 00:00,2012-02-09 00:00,2013-09-26 16:00,2013-09-26 16:00,,2012-06-02 00:00,2012-06-02 00:00,,,2012-03-04 08:00,2012-03-15 16:00,,,,CS_MSOA,PT_Normal,,,,,TG45ako3rUyyvrRwgff0KA,,,,N,0,0,,,2012-06-19 11:46,2012-06-20 10:09,admin,admin
618,144626,5115,22836,6085,1,100,N,N,N,CP_Drtn,TT_Task,DT_FixedDUR2,RV_OK,TK_Complete,4229EOF70,Jacket transportation analysis design report-Approval,,,,0,0,0,0,416,0,0,0,,2011-10-19 08:00,2012-01-22 00:00,2013-09-26 16:00,2013-09-26 16:00,,2012-06-02 00:00,2012-06-02 00:00,,,2011-10-19 08:00,2012-01-05 16:00,,,,,PT_Normal,,,,,z2JuXYWTBkqAc1zF5pycag,,,,N,0,0,,,2012-06-19 11:46,2012-06-20 10:09,admin,admin
619,144627,5115,22836,6085,1,100,N,N,N,CP_Drtn,TT_Task,DT_FixedDUR2,RV_OK,TK_Complete,4229EOF330,Jacket transportation analysis design report- Final,,,,0,0,0,0,80,0,0,0,,2012-02-07 00:00,2012-02-09 00:00,2013-09-26 16:00,2013-09-26 16:00,,2012-06-02 00:00,2012-06-02 00:00,,,2012-03-04 08:00,2012-03-15 16:00,,,,,PT_Normal,,,,,RevLYwNz30CgDjFimkC32g,,,,N,0,0,,,2012-06-19 11:46,2012-06-20 10:09,admin,admin
620,144628,5115,22836,6085,1,100,N,N,N,CP_Drtn,TT_Task,DT_FixedDUR2,RV_OK,TK_Complete,4229EOF80,Jacket lifting analysis design report-Approval,,,,0,0,0,0,416,0,0,0,,2011-10-19 08:00,2012-01-05 00:00,2013-09-26 16:00,2013-09-26 16:00,,2012-06-02 00:00,2012-06-02 00:00,,,2011-10-19 08:00,2012-01-05 16:00,,,,,PT_Normal,,,,,s5ltxaPtUEC3l6k4ChU+Mw,,,,N,0,0,,,2012-06-19 11:46,2012-06-20 10:09,admin,admin
621,144629,5115,22836,6085,1,100,N,N,N,CP_Drtn,TT_Task,DT_FixedDUR2,RV_OK,TK_Complete,4229EOF340,Jacket lifting analysis design report-Final,,,,0,0,0,0,80,0,0,0,,2012-01-29 08:00,2012-02-09 00:00,2013-09-26 16:00,2013-09-26 16:00,,2012-06-02 00:00,2012-06-02 00:00,,,2012-01-29 08:00,2012-02-09 16:00,,,,,PT_Normal,,,,,OE2abhMjLkusQZ6C9xjXVw,,,,N,0,0,,,2012-06-19 11:46,2012-06-20 10:09,admin,admin
622,144630,5115,22836,6085,1,100,N,N,N,CP_Drtn,TT_Task,DT_FixedDUR2,RV_OK,TK_Complete,4229EOF90,Jacket floatation & upending analysis report-Approval,,,,0,0,0,0,496,0,0,0,,2011-10-19 08:00,2012-01-31 00:00,2013-09-26 16:00,2013-09-26 16:00,,2012-06-02 00:00,2012-06-02 00:00,,,2011-10-19 08:00,2012-01-19 16:00,,,,,PT_Normal,,,,,MJZRSi4P8kOEAK48Lo5AJA,,,,N,0,0,,,2012-06-19 11:46,2012-06-20 10:09,admin,admin
623,144631,5115,22836,6085,1,100,N,N,N,CP_Drtn,TT_Task,DT_FixedDUR2,RV_OK,TK_Complete,4229EOF370,Jacket floatation & upending analysis report-Final,,,,0,0,0,0,80,0,0,0,,2012-02-13 00:00,2012-03-07 00:00,2013-09-26 16:00,2013-09-26 16:00,,2012-06-02 00:00,2012-06-02 00:00,,,2012-03-27 08:00,2012-04-09 16:00,,,,,PT_Normal,,,,,Eib4HaMYQUKyZUiI9zKeZg,,,,N,0,0,,,2012-06-19 11:46,2012-06-20 10:09,admin,admin
624,144632,5115,22836,6085,1,100,N,N,N,CP_Drtn,TT_Task,DT_FixedDUR2,RV_OK,TK_Complete,4229EOF100,Jacket on-bottom stability report-Approval,,,,0,0,0,0,496,0,0,0,,2011-10-19 08:00,2012-01-31 00:00,2013-09-26 16:00,2013-09-26 16:00,,2012-06-02 00:00,2012-06-02 00:00,,,2011-10-19 08:00,2012-01-19 16:00,,,,,PT_Normal,,,,,9OEXRSfkpk6msKhkXO1l/g,,,,N,0,0,,,2012-06-19 11:46,2012-06-20 10:09,admin,admin
625,144633,5115,22836,6085,1,100,N,N,N,CP_Drtn,TT_Task,DT_FixedDUR2,RV_OK,TK_Complete,4229EOF380,Jacket on-bottom stability report-Final,,,,0,0,0,0,80,0,0,0,,2012-02-13 00:00,2012-02-26 00:00,2013-09-26 16:00,2013-09-26 16:00,,2012-06-02 00:00,2012-06-02 00:00,,,2012-03-29 08:00,2012-04-11 16:00,,,,,PT_Normal,,,,,3rMumPSTjUGE5j3A76v81g,,,,N,0,0,,,2012-06-19 11:46,2012-06-20 10:09,admin,admin
626,144634,5115,22836,6085,1,100,N,N,N,CP_Drtn,TT_Task,DT_FixedDUR2,RV_OK,TK_Complete,4229EOF110,Pile foundation design report-Approval,,,,0,0,0,0,648,0,0,0,,2011-10-19 08:00,2012-03-14 00:00,2013-09-26 16:00,2013-09-26 16:00,,2012-06-02 00:00,2012-06-02 00:00,,,2011-10-19 08:00,2012-02-16 16:00,,,,,PT_Normal,,,,,mbqNG8SbSEWgbOfwps60Gw,,,,N,0,0,,,2012-06-19 11:46,2012-06-20 10:09,admin,admin
627,144635,5115,22836,6085,1,100,N,N,N,CP_Drtn,TT_Task,DT_FixedDUR2,RV_OK,TK_Complete,4229EOF250,Pushover analysis design SOW,,,,0,0,0,0,144,0,0,0,2012-03-01 08:00,2011-12-15 00:00,2011-12-29 00:00,2013-09-26 16:00,2013-09-26 16:00,,2012-06-02 00:00,2012-06-02 00:00,,,2012-03-04 08:00,2012-03-27 16:00,,,,CS_MSO,PT_Normal,,,,,G2FYuxy0cUudjUjQpFWExw,,,,N,0,0,,,2012-06-19 11:46,2012-06-20 10:09,admin,admin
628,144636,5115,22836,6085,1,0,N,N,N,CP_Drtn,TT_Task,DT_FixedDUR2,RV_OK,TK_NotStart,4229EOF470,Pile foundation design report-Final,,2200,904,80,0,0,0,80,0,0,0,,,,2013-09-15 08:00,2013-09-26 16:00,,2012-08-12 08:00,2012-08-30 16:00,2012-08-12 08:00,2012-08-30 16:00,2012-08-12 08:00,2012-08-30 16:00,,2013-09-15 08:00,2013-09-26 16:00,,PT_Normal,,,,,HLx6nWsnmUipmydcZ1864Q,,,,N,0,0,,,2012-06-19 11:46,2012-06-20 09:59,admin,admin
629,144637,5115,22836,6085,1,100,N,N,N,CP_Drtn,TT_Task,DT_FixedDUR2,RV_OK,TK_Complete,4229EOF480,Pushover analysis design T.E.R,,,,0,0,0,0,80,0,0,0,,2012-02-01 00:00,2012-03-04 16:00,2013-09-26 16:00,2013-09-26 16:00,,2012-06-02 00:00,2012-06-02 00:00,,,2012-05-03 08:00,2012-05-16 16:00,,,,,PT_Normal,,,,,Y59XJSAsMEKQO9xhy0Kzqw,,,,N,0,0,,,2012-06-19 11:46,2012-06-20 10:09,admin,admin
630,144638,5115,22836,6085,1,100,N,N,N,CP_Drtn,TT_Task,DT_FixedDUR2,RV_OK,TK_Complete,4229EOF180,Jacket miscellaneous design report-Approval,,,,0,0,0,0,392,0,0,0,,2011-11-23 00:00,2012-02-09 00:00,2013-09-26 16:00,2013-09-26 16:00,,2012-06-02 00:00,2012-06-02 00:00,,,2011-12-04 08:00,2012-02-09 16:00,,,,,PT_Normal,,,,,hynMrl/qPU6geHYuWqDOog,,,,N,0,0,,,2012-06-19 11:46,2012-06-20 10:09,admin,admin
631,144639,5115,22836,6085,1,0,N,N,N,CP_Drtn,TT_Task,DT_FixedDUR2,RV_OK,TK_NotStart,4229EOF630,Jacket miscellaneous design report-Final,,2080,784,80,0,0,0,80,0,0,0,,,,2013-09-15 08:00,2013-09-26 16:00,,2012-09-09 08:00,2012-09-20 16:00,2012-09-09 08:00,2012-09-20 16:00,2012-09-09 08:00,2012-09-20 16:00,,2013-09-15 08:00,2013-09-26 16:00,,PT_Normal,,,,,jyUzJ/if5kibTSWSPe/quA,,,,N,0,0,,,2012-06-19 11:46,2012-06-20 09:59,admin,admin
632,144640,5115,22836,6085,1,100,N,N,N,CP_Drtn,TT_Task,DT_FixedDUR2,RV_OK,TK_Complete,4229EOF190,Jacket weight control report -Approval,,,,0,0,0,0,64,0,0,0,,2011-12-14 00:00,2012-01-26 00:00,2013-09-26 16:00,2013-09-26 16:00,,2012-06-02 00:00,2012-06-02 00:00,,,2012-01-01 08:00,2012-01-10 16:00,,,,,PT_Normal,,,,,opdmHkThm062FY5Tx6ZVLw,,,,N,0,0,,,2012-06-19 11:46,2012-06-20 10:09,admin,admin
633,144641,5115,22836,6085,1,100,N,N,N,CP_Drtn,TT_Task,DT_FixedDUR2,RV_OK,TK_Complete,4229EOF300,Topside weight control report- Approval,,,,0,0,0,0,64,0,0,0,,2011-11-22 00:00,2012-01-31 00:00,2013-09-26 16:00,2013-09-26 16:00,,2012-06-02 00:00,2012-06-02 00:00,,,2012-01-18 08:00,2012-01-30 16:00,,,,,PT_Normal,,,,,SpwGgQcbYk+cT7DDMG2aBA,,,,N,0,0,,,2012-06-19 11:46,2012-06-20 10:09,admin,admin
634,144642,5115,22836,6085,1,100,N,N,N,CP_Drtn,TT_Task,DT_FixedDUR2,RV_OK,TK_Complete,4229EOF430,Jacket weight control report -Final,,,,0,0,0,0,64,0,0,0,,2012-01-11 00:00,2012-02-09 00:00,2013-09-26 16:00,2013-09-26 16:00,,2012-06-02 00:00,2012-06-02 00:00,,,2012-03-25 08:00,2012-04-03 16:00,,,,,PT_Normal,,,,,Xqa4ebHEqkKskUxKn4nC9A,,,,N,0,0,,,2012-06-19 11:46,2012-06-20 10:09,admin,admin
635,144643,5115,22837,6037,1,100,N,N,N,CP_Drtn,TT_Task,DT_FixedDUR2,RV_OK,TK_Complete,4229EOF210,Steel structure specification,,,,0,0,0,0,48,0,0,0,,2011-12-13 00:00,2011-12-20 16:00,2013-09-26 16:00,2013-09-26 16:00,,2012-06-02 00:00,2012-06-02 00:00,,,2011-12-14 16:00,2011-12-20 16:00,,,,,PT_Normal,,,,,mBlFipgkcUSHp5trnFVZOQ,nh2OsvLATSC5rtxCW++dPA,,,N,0,0,,,2012-06-19 11:46,2012-06-20 10:09,admin,admin
636,144644,5115,22837,6037,1,100,N,N,N,CP_Drtn,TT_Task,DT_FixedDUR2,RV_OK,TK_Complete,4229EOF220,Weight control procedures,,,,0,0,0,0,48,0,0,0,,2011-12-13 00:00,2011-12-20 16:00,2013-09-26 16:00,2013-09-26 16:00,,2012-06-02 00:00,2012-06-02 00:00,,,2011-12-14 16:00,2011-12-20 16:00,,,,,PT_Normal,,,,,HQSgQEIeV0aBeeVE+ePTNg,P/q4bOA8Q5mdAZKi/N3pnw,,,N,0,0,,,2012-06-19 11:46,2012-06-20 10:09,admin,admin
637,144645,5115,22837,6037,1,100,N,N,N,CP_Drtn,TT_Task,DT_FixedDUR2,RV_OK,TK_Complete,4229EOF620,Deck Secondary  Steel structure MTO,,,,0,0,0,0,40,0,0,0,,2011-12-18 00:00,2011-12-28 00:00,2013-09-26 16:00,2013-09-26 16:00,,2012-09-06 16:00,2012-09-06 16:00,,,2012-08-30 16:00,2012-09-04 16:00,,,,,PT_Normal,,,,,m9bFZ+aCiEquJe5NtDgoDQ,sANoBJq9SXeJwue+C5ok0Q,,,N,0,0,,,2012-06-19 11:46,2012-06-20 10:09,admin,admin
638,144646,5115,22837,6037,1,100,N,N,N,CP_Drtn,TT_Task,DT_FixedDUR2,RV_OK,TK_Complete,4229EOF540,Jacket secondary steel & Piles  MTO,,,,0,0,0,0,40,0,0,0,,2011-12-18 08:00,2011-12-28 00:00,2013-09-26 16:00,2013-09-26 16:00,,2012-06-02 00:00,2012-06-02 00:00,,,2011-12-18 08:00,2011-12-22 17:00,,,,,PT_Normal,,,,,6F8F+ArhEUy6WjcxPNVwvg,f8msic+ESYmMQVyjAZKluA,,,N,0,0,,,2012-06-19 11:46,2012-06-20 10:09,admin,admin
639,144647,5115,22837,6037,1,100,N,N,N,CP_Drtn,TT_Task,DT_FixedDUR2,RV_OK,TK_Complete,4229EOF640,Jacket  Primary  Steel structure MTO,,,,0,0,0,0,40,0,0,0,,2011-12-18 08:00,2011-12-25 00:00,2013-09-26 16:00,2013-09-26 16:00,,2012-06-02 00:00,2012-06-02 00:00,,,2011-12-18 08:00,2011-12-22 17:00,,,,,PT_Normal,,,,,7EsL29naiUajfCQx8LGSGg,WfW5Cj3gRpKnkh5ags/fyQ,,,N,0,0,,,2012-06-19 11:46,2012-06-20 10:09,admin,admin
640,144648,5115,22837,6037,1,100,N,N,N,CP_Drtn,TT_Task,DT_FixedDUR2,RV_OK,TK_Complete,4229EOF650,Deck Primary Steel structure MTO,,,,0,0,0,0,40,0,0,0,,2011-12-18 08:00,2011-12-28 00:00,2013-09-26 16:00,2013-09-26 16:00,,2012-06-02 00:00,2012-06-02 00:00,,,2011-12-18 08:00,2011-12-22 17:00,,,,,PT_Normal,,,,,e7uEMViFP0qi3q0l7Si3dw,BbgcnaE3QVSI7hB6gcXwgQ,,,N,0,0,,,2012-06-19 11:46,2012-06-20 10:09,admin,admin
641,144649,5115,22837,6037,1,100,N,N,N,CP_Drtn,TT_Task,DT_FixedDUR2,RV_OK,TK_Complete,4229EOF660,Jacket app. MTO,,,,0,0,0,0,40,0,0,0,,2011-12-18 00:00,2011-12-28 00:00,2013-09-26 16:00,2013-09-26 16:00,,2012-06-20 16:00,2012-06-20 16:00,,,2012-05-21 16:00,2012-05-26 16:00,,,,,PT_Normal,,,,,UDnbUQNh9EO1AAxPXljEuA,RtOWAB3Bl0iNbQrSBz3AiA,,,N,0,0,,,2012-06-19 11:46,2012-06-20 10:09,admin,admin
642,144650,5115,22858,6085,1,100,N,N,N,CP_Drtn,TT_Task,DT_FixedDUR2,RV_OK,TK_Complete,4229EEL90,Cable schedule IFA,,,,0,0,0,0,40,0,0,0,,2011-12-04 00:00,2011-12-06 00:00,2013-03-31 08:00,2013-03-31 08:00,,2012-06-02 00:00,2012-06-02 00:00,,,2011-12-11 08:00,2011-12-15 16:00,,,,,PT_Normal,,,,,h4hMZeopUUmJC7YDFKMSdQ,,,,N,0,0,,,2012-06-19 11:46,2012-06-20 10:09,admin,admin
643,144651,5115,22858,6085,1,100,N,N,N,CP_Drtn,TT_Task,DT_FixedDUR2,RV_OK,TK_Complete,4229EEL180,Cable schedule IFD,,,,0,0,0,0,40,0,0,0,,2012-01-19 00:00,2012-02-01 00:00,2013-09-08 08:00,2013-09-08 08:00,,2012-06-02 00:00,2012-06-02 00:00,,,2012-03-25 08:00,2012-03-29 16:00,,,,,PT_Normal,,,,,HEZPzGg5kEig8EqLwXBc+w,g6eh+Mkywk6aOzOj8iXrVw,,,N,0,0,,,2012-06-19 11:46,2012-06-20 10:09,admin,admin
644,144652,5115,22858,6085,1,0,N,N,N,CP_Drtn,TT_Task,DT_FixedDUR2,RV_OK,TK_NotStart,4229EEL250,Cable schedule IFC,,2160,0,40,0,0,0,40,0,0,0,,,,2013-09-08 08:00,2013-09-12 16:00,,2012-08-12 08:00,2012-08-16 16:00,2012-08-12 08:00,2012-08-16 16:00,2012-08-12 08:00,2012-08-16 16:00,,2013-09-08 08:00,2013-09-12 16:00,,PT_Normal,,,,,5yn/XoVho0WVhJZrsP71BQ,,,,N,0,0,,,2012-06-19 11:46,2012-06-20 09:59,admin,admin
645,144653,5115,22858,6085,1,100,N,N,N,CP_Drtn,TT_Task,DT_FixedDUR2,RV_OK,TK_Complete,4229EEL100,Electrical cable routing layouts -Approval,,,,0,0,0,0,80,0,0,0,2012-01-11 08:00,2011-11-30 00:00,2011-12-20 00:00,2013-03-31 08:00,2013-03-31 08:00,,2012-06-02 00:00,2012-06-02 00:00,,,2012-01-11 08:00,2012-01-24 16:00,,,,CS_MSO,PT_Normal,,,,,ng19GFvio0eg2LH0GmV2hA,,,,N,0,0,,,2012-06-19 11:46,2012-06-20 10:09,admin,admin
646,144654,5115,22858,6085,1,100,N,N,N,CP_Drtn,TT_Task,DT_FixedDUR2,RV_OK,TK_Complete,4229EEL190,Electrical cable routing layouts -Design,,,,0,0,0,0,80,0,0,0,,2012-01-01 00:00,2012-01-30 00:00,2013-08-19 08:00,2013-08-19 08:00,,2012-06-02 00:00,2012-06-02 00:00,,,2012-03-18 08:00,2012-03-29 16:00,,,,,PT_Normal,,,,,aaVAczlsG0Wz7Lp2906/Pw,,,,N,0,0,,,2012-06-19 11:46,2012-06-20 10:09,admin,admin
647,144655,5115,22858,6085,1,0,N,N,N,CP_Drtn,TT_Task,DT_FixedDUR2,RV_OK,TK_NotStart,4229EEL260,Electrical cable routing layouts -Construction,,2160,0,80,0,0,0,80,0,0,0,,,,2013-09-01 08:00,2013-09-12 16:00,,2012-08-05 08:00,2012-08-16 16:00,2012-08-05 08:00,2012-08-16 16:00,2012-08-05 08:00,2012-08-16 16:00,,2013-09-01 08:00,2013-09-12 16:00,,PT_Normal,,,,,B0iLHHc7okiiX3naOwohkg,,,,N,0,0,,,2012-06-19 11:46,2012-06-20 09:59,admin,admin
648,144656,5115,22858,6085,1,0,N,N,N,CP_Drtn,TT_Task,DT_FixedDUR2,RV_OK,TK_NotStart,4229EEL220,Interconnection & wiring diagram- Construction,,2248,88,120,0,0,0,120,0,0,0,,,,2013-08-25 08:00,2013-09-12 16:00,,2012-07-12 08:00,2012-08-01 16:00,2012-07-12 08:00,2012-08-01 16:00,2012-07-12 08:00,2012-08-01 16:00,,2013-08-25 08:00,2013-09-12 16:00,,PT_Normal,,,,,0ruIlsUnVE2xz8F5W+LN0A,,,,N,0,0,,,2012-06-19 11:46,2012-06-20 09:59,admin,admin
649,144657,5115,22858,6085,1,0,N,N,N,CP_Drtn,TT_Task,DT_FixedDUR2,RV_OK,TK_NotStart,4229EEL270,Electrical installation details -Construction,,2160,864,80,0,0,0,80,0,0,0,,,,2013-09-15 08:00,2013-09-26 16:00,,2012-08-26 08:00,2012-09-06 16:00,2012-08-26 08:00,2012-09-06 16:00,2012-08-26 08:00,2012-09-06 16:00,,2013-09-15 08:00,2013-09-26 16:00,,PT_Normal,,,,,t/VSBgf17kavcj5ixCvUhA,,,,N,0,0,,,2012-06-19 11:46,2012-06-20 09:59,admin,admin
650,144658,5115,22858,6085,1,0,N,N,N,CP_Drtn,TT_Task,DT_FixedDUR2,RV_OK,TK_NotStart,4229EEL290,Single line diagram -Construction,,2328,1032,80,0,0,0,80,0,0,0,,,,2013-09-15 08:00,2013-09-26 16:00,,2012-07-19 08:00,2012-08-01 16:00,2012-07-19 08:00,2012-08-01 16:00,2012-07-19 08:00,2012-08-01 16:00,,2013-09-15 08:00,2013-09-26 16:00,,PT_Normal,,,,,hK0ZW7gMzECHaB3K8RlVOw,Qx0q73DiTyaQe37JuO5tMQ,,,N,0,0,,,2012-06-19 11:46,2012-06-20 09:59,admin,admin
651,144659,5115,22858,6085,1,100,N,N,N,CP_Drtn,TT_Task,DT_FixedDUR2,RV_OK,TK_Complete,4229EEL50,Electrical Load analysis -Design,,,,0,0,0,0,40,0,0,0,,2011-11-02 00:00,2011-12-15 00:00,2013-09-15 08:00,2013-09-15 08:00,,2012-06-02 00:00,2012-06-02 00:00,,,2011-12-07 08:00,2011-12-13 16:00,,,,,PT_Normal,,,,,vo8/laLdike8cf5Z8gawwg,MiQZLA+kQ+6Rx/LgkcR9vw,,,N,0,0,,,2012-06-19 11:46,2012-06-20 10:09,admin,admin
652,144660,5115,22858,6085,1,0,N,N,N,CP_Drtn,TT_Task,DT_FixedDUR2,RV_OK,TK_NotStart,4229EEL110,Electrical Load analysis -Final,,2360,0,40,0,0,0,40,0,0,0,,,,2013-09-08 08:00,2013-09-12 16:00,,2012-07-08 08:00,2012-07-12 16:00,2012-07-08 08:00,2012-07-12 16:00,2012-07-08 08:00,2012-07-12 16:00,,2013-09-08 08:00,2013-09-12 16:00,,PT_Normal,,,,,cXAlYBacjkanCjZiOUQ+1Q,P+VGqfXaRf+wtG1WDLthHA,,,N,0,0,,,2012-06-19 11:46,2012-06-20 09:59,admin,admin
653,144661,5115,22858,6085,1,100,N,N,N,CP_Drtn,TT_Task,DT_FixedDUR2,RV_OK,TK_Complete,4229EEL120,Single line diagram -Design,,,,0,0,0,0,64,0,0,0,,2011-11-20 00:00,2011-11-27 00:00,2013-09-15 08:00,2013-09-15 08:00,,2012-07-12 16:00,2012-07-12 16:00,,,2011-12-27 08:00,2012-01-05 16:00,,,,,PT_Normal,,,,,+Rrq+GQdUE6UnXit8aBHYw,1bglG1aCRFG8YhRS8hMk7Q,,,N,0,0,,,2012-06-19 11:46,2012-06-20 10:09,admin,admin
654,144662,5115,22858,6085,1,100,N,N,N,CP_Drtn,TT_Task,DT_FixedDUR2,RV_OK,TK_Complete,4229EEL70,Hazardous area classification layout -IFA,,,,0,0,0,0,80,0,0,0,,2011-11-21 00:00,2011-11-29 00:00,2013-09-15 08:00,2013-09-15 08:00,,2012-06-02 00:00,2012-06-02 00:00,,,2011-12-04 08:00,2011-12-15 16:00,,,,,PT_Normal,,,,,+nhCFoNKqkOjC5dvhmtsug,,,,N,0,0,,,2012-06-19 11:46,2012-06-20 10:09,admin,admin
655,144663,5115,22858,6085,1,100,N,N,N,CP_Drtn,TT_Task,DT_FixedDUR2,RV_OK,TK_Complete,4229EEL160,Hazardous area classification layout -IFD,,,,0,0,0,0,80,0,0,0,,2011-11-27 00:00,2012-01-24 16:00,2013-09-15 08:00,2013-09-15 08:00,,2012-06-02 00:00,2012-06-02 00:00,,,2012-01-12 08:00,2012-01-26 16:00,,,,,PT_Normal,,,,,aRLUpEY/fkabZn8pWE5R4g,,,,N,0,0,,,2012-06-19 11:46,2012-06-20 10:09,admin,admin
656,144664,5115,22858,6085,1,0,N,N,N,CP_Drtn,TT_Task,DT_FixedDUR2,RV_OK,TK_NotStart,4229EEL240,Hazardous area classification layout -IFC,,2216,56,80,0,0,0,80,0,0,0,,,,2013-09-01 08:00,2013-09-12 16:00,,2012-07-25 08:00,2012-08-07 16:00,2012-07-25 08:00,2012-08-07 16:00,2012-07-25 08:00,2012-08-07 16:00,,2013-09-01 08:00,2013-09-12 16:00,,PT_Normal,,,,,yii0eDEwRkiQlutgbuBXgw,,,,N,0,0,,,2012-06-19 11:46,2012-06-20 09:59,admin,admin
657,144665,5115,22858,6085,1,100,N,N,N,CP_Drtn,TT_Task,DT_FixedDUR2,RV_OK,TK_Complete,4229EEL80,Electrical layouts IFA,,,,0,0,0,0,120,0,0,0,,2011-11-22 00:00,2011-12-08 00:00,2013-03-31 08:00,2013-03-31 08:00,,2012-06-02 00:00,2012-06-02 00:00,,,2011-12-04 08:00,2011-12-22 16:00,,,,,PT_Normal,,,,,4uMiiZLvwEyH40k0jhPgow,,,,N,0,0,,,2012-06-19 11:46,2012-06-20 10:09,admin,admin
658,144666,5115,22858,6085,1,100,N,N,N,CP_Drtn,TT_Task,DT_FixedDUR2,RV_OK,TK_Complete,4229EEL170,Electrical layouts IFD,,,,0,0,0,0,120,0,0,0,,2012-01-08 00:00,2012-01-29 00:00,2013-08-19 08:00,2013-08-19 08:00,,2012-06-02 00:00,2012-06-02 00:00,,,2012-03-04 08:00,2012-03-22 16:00,,,,,PT_Normal,,,,,VaqzKYejGEK65Se2t6KSgA,,,,N,0,0,,,2012-06-19 11:46,2012-06-20 10:09,admin,admin
659,144667,5115,22858,6085,1,100,N,N,N,CP_Drtn,TT_Task,DT_FixedDUR2,RV_OK,TK_Complete,4229EEL20,Single line diagram -Approval,,,,0,0,0,0,40,0,0,0,,2011-08-21 00:00,2011-08-25 00:00,2013-09-15 08:00,2013-09-15 08:00,,2012-06-02 00:00,2012-06-02 00:00,,,2011-12-11 08:00,2011-12-15 16:00,,,,,PT_Normal,,,,,FWnDU0ZUlUyidIWZCd1OXw,kHcphadgQQqJiQj5rZMbkQ,,,N,0,0,,,2012-06-19 11:46,2012-06-20 10:09,admin,admin
660,144668,5115,22858,6085,1,0,N,N,N,CP_Drtn,TT_Task,DT_FixedDUR2,RV_OK,TK_NotStart,4229EEL230,Electrical layouts-Construction,,2200,40,80,0,0,0,80,0,0,0,,,,2013-08-25 08:00,2013-09-05 16:00,,2012-07-22 08:00,2012-08-02 16:00,2012-07-22 08:00,2012-08-02 16:00,2012-07-22 08:00,2012-08-02 16:00,,2013-08-25 08:00,2013-09-05 16:00,,PT_Normal,,,,,Hq3rVGCnIUWmKqE4QaOwKA,,,,N,0,0,,,2012-06-19 11:46,2012-06-20 09:59,admin,admin
661,144669,5115,22841,6085,1,100,N,N,N,CP_Drtn,TT_Task,DT_FixedDUR2,RV_OK,TK_Complete,4229EEL60,T.E.R for Navigation aids,,,,0,0,0,0,120,0,0,0,,2011-10-17 08:00,2011-12-07 16:00,2013-01-14 08:00,2013-01-14 08:00,,2012-06-02 00:00,2012-06-02 00:00,,,2011-10-17 08:00,2011-11-13 16:00,,,,,PT_Normal,,,,,ILNaYf3Z6EeTpkfc0DXK7Q,+adQvSlUzkOZha6HG7fiRA,,,N,0,0,,,2012-06-19 11:46,2012-06-20 10:09,admin,admin
662,144670,5115,22841,6085,1,100,N,N,N,CP_Drtn,TT_Task,DT_FixedDUR2,RV_OK,TK_Complete,4229EEL150,MRP for Navigation aids,,,,0,0,0,0,40,0,0,0,,2012-01-12 00:00,2012-01-18 00:00,2013-01-14 08:00,2013-01-14 08:00,,2012-06-02 00:00,2012-06-02 00:00,,,2012-01-16 08:00,2012-01-22 16:00,,,,,PT_Normal,,,,,eWnlN0j7AkKLPtmHIn7tDQ,uCQ7t7XtkE2pu5tmschigw,,,N,0,0,,,2012-06-19 11:46,2012-06-20 10:09,admin,admin
663,144671,5115,22841,6085,1,100,N,N,N,CP_Drtn,TT_Task,DT_FixedDUR2,RV_OK,TK_Complete,4229EEL30,Issue MRQ for Navigation aids,,,,0,0,0,0,24,0,0,0,,2011-09-15 08:00,2011-09-19 16:00,2013-01-14 08:00,2013-01-14 08:00,,2012-06-02 00:00,2012-06-02 00:00,,,2011-09-15 08:00,2011-09-19 16:00,,,,,PT_Normal,,,,,u71/OQyzKUO8TdOsYPkCNA,fa+QQs2lrkWif6ZY5ZmI+Q,,,N,0,0,,,2012-06-19 11:46,2012-06-20 10:09,admin,admin
664,144672,5115,22841,6085,1,0,N,N,N,CP_Drtn,TT_Task,DT_FixedDUR2,RV_OK,TK_Active,4229EEL200,T.E.R for Electrical bulk,,1640,0,8,0,0,0,120,0,0,0,,2012-02-02 00:00,,2013-03-31 08:00,2013-03-31 16:00,2012-06-03 16:00,2012-06-03 08:00,2012-06-03 16:00,2012-06-03 08:00,2012-06-03 16:00,2012-03-05 08:00,2012-03-25 16:00,,2013-03-31 08:00,2013-03-31 16:00,,PT_Normal,,,,,p08VzyC4X0WOSJiTP0Pnjw,+adQvSlUzkOZha6HG7fiRA,,,N,0,0,,,2012-06-19 11:46,2012-06-20 09:59,admin,admin
665,144673,5115,22841,6085,1,0,N,N,N,CP_Drtn,TT_Task,DT_FixedDUR2,RV_OK,TK_NotStart,4229EEL210,MRP for Electrical bulk,,1640,0,40,0,0,0,40,0,0,0,,,,2013-04-29 08:00,2013-05-05 16:00,,2012-07-02 08:00,2012-07-08 16:00,2012-07-02 08:00,2012-07-08 16:00,2012-07-02 08:00,2012-07-08 16:00,,2013-04-29 08:00,2013-05-05 16:00,,PT_Normal,,,,,C9N7hZ+Hc0+bRSgrjApwBg,uCQ7t7XtkE2pu5tmschigw,,,N,0,0,,,2012-06-19 11:46,2012-06-20 09:59,admin,admin
666,144674,5115,22841,6085,1,100,N,N,N,CP_Drtn,TT_Task,DT_FixedDUR2,RV_OK,TK_Complete,4229EEL140,Issue MRQ for Electrical bulk,,,,0,0,0,0,64,0,0,0,,2011-12-18 08:00,2011-12-27 16:00,2013-03-31 08:00,2013-03-31 08:00,,2012-06-02 00:00,2012-06-02 00:00,,,2011-12-18 08:00,2011-12-27 16:00,,,,,PT_Normal,,,,,X5qR73WxIE6L0CDtkr7yyQ,fa+QQs2lrkWif6ZY5ZmI+Q,,,N,0,0,,,2012-06-19 11:46,2012-06-20 10:09,admin,admin
667,144675,5115,22841,6085,1,0,N,N,N,CP_Drtn,TT_Task,DT_FixedDUR2,RV_OK,TK_Active,4229EEL300,V.P.R for Navigation aids,,2360,1064,280,0,0,0,104,0,0,0,,2012-04-26 00:00,,2013-08-11 08:00,2013-09-26 16:00,,2012-06-10 08:00,2012-07-26 16:00,2012-06-10 08:00,2012-07-26 16:00,2012-05-06 08:00,2012-05-22 16:00,,2013-08-11 08:00,2013-09-26 16:00,,PT_Normal,,,,,vxnf+mcz8EqIzK9boKjaaA,,,,N,0,0,,,2012-06-19 11:46,2012-06-20 09:59,admin,admin
668,144676,5115,22841,6085,1,0,N,N,N,CP_Drtn,TT_Task,DT_FixedDUR2,RV_OK,TK_Active,4229EEL280,V.P.R for solar power unit,,2160,1016,480,0,0,0,560,0,0,0,,2012-04-05 00:00,,2013-07-07 08:00,2013-09-26 16:00,,2012-06-10 08:00,2012-09-06 16:00,2012-06-10 08:00,2012-09-06 16:00,2012-05-06 08:00,2012-08-09 16:00,,2013-07-07 08:00,2013-09-26 16:00,,PT_Normal,,,,,dR3+QExJ5ka1D9OK+dRVWg,,,,N,0,0,,,2012-06-19 11:46,2012-06-20 09:59,admin,admin
669,144677,5115,22841,6085,1,100,N,N,N,CP_Drtn,TT_Task,DT_FixedDUR2,RV_OK,TK_Complete,4229EEL40,T.E.R for solar power unit,,,,0,0,0,0,120,0,0,0,,2011-10-13 00:00,2012-01-31 00:00,2012-12-24 08:00,2012-12-24 08:00,,2012-06-02 00:00,2012-06-02 00:00,,,2011-10-16 08:00,2011-11-03 16:00,,,,,PT_Normal,,,,,Qqb0F8Pe8EKVNGOSf5lnAQ,+adQvSlUzkOZha6HG7fiRA,,,N,0,0,,,2012-06-19 11:46,2012-06-20 10:09,admin,admin
670,144678,5115,22841,6085,1,100,N,N,N,CP_Drtn,TT_Task,DT_FixedDUR2,RV_OK,TK_Complete,4229EEL130,MRP for solar power unit,,,,0,0,0,0,40,0,0,0,,2012-03-08 08:00,2012-03-28 00:00,2012-12-24 08:00,2012-12-24 08:00,,2012-06-02 00:00,2012-06-02 00:00,,,2012-03-08 08:00,2012-03-14 16:00,,,,,PT_Normal,,,,,DSseR1yDmUG6MnHXTmN+ug,uCQ7t7XtkE2pu5tmschigw,,,N,0,0,,,2012-06-19 11:46,2012-06-20 10:09,admin,admin
671,144679,5115,22841,6085,1,100,N,N,N,CP_Drtn,TT_Task,DT_FixedDUR2,RV_OK,TK_Complete,4229EEL10,Issue MRQ for solar power unit,,,,0,0,0,0,56,0,0,0,,2011-08-15 08:00,2011-08-23 16:00,2012-12-24 08:00,2012-12-24 08:00,,2012-06-02 00:00,2012-06-02 00:00,,,2011-08-15 08:00,2011-08-23 16:00,,,,,PT_Normal,,,,,FQydzE4C7U2loEtqQuCSpQ,fa+QQs2lrkWif6ZY5ZmI+Q,,,N,0,0,,,2012-06-19 11:46,2012-06-20 10:09,admin,admin
672,144680,5115,22843,6085,1,100,N,N,N,CP_Drtn,TT_Task,DT_FixedDUR2,RV_OK,TK_Complete,4229EIN70,Instrument I/O list issued for approval,,,,0,0,0,0,16,0,0,0,,2011-09-29 00:00,2011-10-09 00:00,2013-09-26 16:00,2013-09-26 16:00,,2012-06-02 00:00,2012-06-02 00:00,,,2011-10-13 08:00,2011-10-16 16:00,,,,,PT_Normal,,,,,oyuqxJ7JBESRdkd7qe4QhA,GemY4T2B0EmUheDKIF6NWQ,,,N,0,0,,,2012-06-19 11:46,2012-06-20 10:09,admin,admin
673,144681,5115,22843,6085,1,100,N,N,N,CP_Drtn,TT_Task,DT_FixedDUR2,RV_OK,TK_Complete,4229EIN140,Instrument  cable / tubing routing layouts IFA,,,,0,0,0,0,80,0,0,0,,2011-12-05 00:00,2012-01-26 00:00,2013-08-15 08:00,2013-08-15 08:00,,2012-06-02 00:00,2012-06-02 00:00,,,2011-12-11 08:00,2011-12-22 16:00,,,,,PT_Normal,,,,,RR/5nfvr0EeTz1DmgltklA,,,,N,0,0,,,2012-06-19 11:46,2012-06-20 10:09,admin,admin
674,144682,5115,22843,6085,1,0,N,N,N,CP_Drtn,TT_Task,DT_FixedDUR2,RV_OK,TK_NotStart,4229EIN440,Instrument hook-ups issued for construction,,2320,1024,80,0,0,0,80,0,0,0,,,,2013-09-15 08:00,2013-09-26 16:00,,2012-07-22 08:00,2012-08-02 16:00,2012-07-22 08:00,2012-08-02 16:00,2012-07-22 08:00,2012-08-02 16:00,,2013-09-15 08:00,2013-09-26 16:00,,PT_Normal,,,,,rWqTUiHPBUapBMOUQ54YPg,Q6A1MJ+tAkeyDTn8ferz6A,,,N,0,0,,,2012-06-19 11:46,2012-06-20 09:59,admin,admin
675,144683,5115,22843,6085,1,0,N,N,N,CP_Drtn,TT_Task,DT_FixedDUR2,RV_OK,TK_NotStart,4229EIN460,Instrument  cable / tubing routing layouts IFC,,2200,0,80,0,0,0,80,0,0,0,,,,2013-09-01 08:00,2013-09-12 16:00,,2012-07-29 08:00,2012-08-09 16:00,2012-07-29 08:00,2012-08-09 16:00,2012-07-29 08:00,2012-08-09 16:00,,2013-09-01 08:00,2013-09-12 16:00,,PT_Normal,,,,,WWGYLb6sWEiC0bsURNHeVw,avZG58y2z0Gkt+UeaJ1/ug,,,N,0,0,,,2012-06-19 11:46,2012-06-20 09:59,admin,admin
676,144684,5115,22843,6085,1,0,N,N,N,CP_Drtn,TT_Task,DT_FixedDUR2,RV_OK,TK_NotStart,4229EIN410,Instrument I/O list issued for construction,,2440,1144,40,0,0,0,40,0,0,0,,,,2013-09-22 08:00,2013-09-26 16:00,,2012-07-08 08:00,2012-07-12 16:00,2012-07-08 08:00,2012-07-12 16:00,2012-07-08 08:00,2012-07-12 16:00,,2013-09-22 08:00,2013-09-26 16:00,,PT_Normal,,,,,IzmX0YyR2UmdYkImRxPVcg,GemY4T2B0EmUheDKIF6NWQ,,,N,0,0,,,2012-06-19 11:46,2012-06-20 09:59,admin,admin
677,144685,5115,22843,6085,1,0,N,N,N,CP_Drtn,TT_Task,DT_FixedDUR2,RV_OK,TK_NotStart,4229EIN400,Instrument index issued for construction,,2440,0,40,0,0,0,40,0,0,0,,,,2013-09-15 08:00,2013-09-19 16:00,,2012-07-01 08:00,2012-07-05 16:00,2012-07-01 08:00,2012-07-05 16:00,2012-07-01 08:00,2012-07-05 16:00,,2013-09-15 08:00,2013-09-19 16:00,,PT_Normal,,,,,q8fSiJUw3kGYc6hmjGKb8A,tEpanMSzcU6QCV0SomSrAg,,,N,0,0,,,2012-06-19 11:46,2012-06-20 09:59,admin,admin
678,144686,5115,22843,6085,1,100,N,N,N,CP_Drtn,TT_Task,DT_FixedDUR2,RV_OK,TK_Complete,4229EIN130,Instrument index issued for design,,,,0,0,0,0,40,0,0,0,,2011-11-28 00:00,2011-12-13 00:00,2013-09-26 16:00,2013-09-26 16:00,,2012-06-02 00:00,2012-06-02 00:00,,,2011-12-08 08:00,2011-12-14 16:00,,,,,PT_Normal,,,,,cRVVfyNV5ESoeyZjTivxhw,,,,N,0,0,,,2012-06-19 11:46,2012-06-20 10:09,admin,admin
679,144687,5115,22843,6085,1,100,N,N,N,CP_Drtn,TT_Task,DT_FixedDUR2,RV_OK,TK_Complete,4229EIN150,Instrument I/O list issued for design,,,,0,0,0,0,16,0,0,0,,2011-10-23 00:00,2011-12-16 00:00,2013-09-26 16:00,2013-09-26 16:00,,2012-06-02 00:00,2012-06-02 00:00,,,2011-12-15 08:00,2011-12-18 16:00,,,,,PT_Normal,,,,,UUgkRo0D80aMmRf5nerhuw,,,,N,0,0,,,2012-06-19 11:46,2012-06-20 10:09,admin,admin
680,144688,5115,22843,6085,1,100,N,N,N,CP_Drtn,TT_Task,DT_FixedDUR2,RV_OK,TK_Complete,4229EIN300,Instrument cable / tubing schedule for design,,,,0,0,0,0,40,0,0,0,,2012-01-24 00:00,2012-01-24 00:00,2013-09-26 16:00,2013-09-26 16:00,,2012-06-02 00:00,2012-06-02 00:00,,,2012-03-04 08:00,2012-03-08 16:00,,,,,PT_Normal,,,,,Oe30Ois1lUq7f/UMPt4PVg,,,,N,0,0,,,2012-06-19 11:46,2012-06-20 10:09,admin,admin
681,144689,5115,22843,6085,1,100,N,N,N,CP_Drtn,TT_Task,DT_FixedDUR2,RV_OK,TK_Complete,4229EIN310,Instrument hook-ups issued for design,,,,0,0,0,0,80,0,0,0,,2012-01-10 00:00,2012-02-02 00:00,2013-09-26 16:00,2013-09-26 16:00,,2012-06-02 00:00,2012-06-02 00:00,,,2012-03-04 08:00,2012-03-15 16:00,,,,,PT_Normal,,,,,g2PeMcwdF0ekU4zei4VkOw,,,,N,0,0,,,2012-06-19 11:46,2012-06-20 10:09,admin,admin
682,144690,5115,22843,6085,1,0,N,N,N,CP_Drtn,TT_Task,DT_FixedDUR2,RV_OK,TK_NotStart,4229EIN390,Safeguard system schematic diagram- Construction,,2200,904,80,0,0,0,80,0,0,0,,,,2013-09-15 08:00,2013-09-26 16:00,,2012-08-12 08:00,2012-08-30 16:00,2012-08-12 08:00,2012-08-30 16:00,2012-08-12 08:00,2012-08-30 16:00,,2013-09-15 08:00,2013-09-26 16:00,,PT_Normal,,,,,NOaQvB8nLkGUR0XTdfTYcQ,,,,N,0,0,,,2012-06-19 11:46,2012-06-20 09:59,admin,admin
683,144691,5115,22843,6085,1,0,N,N,N,CP_Drtn,TT_Task,DT_FixedDUR2,RV_OK,TK_NotStart,4229EIN430,Instrument wiring diagram-Construction,,2160,864,80,0,0,0,80,0,0,0,,,,2013-09-15 08:00,2013-09-26 16:00,,2012-08-26 08:00,2012-09-06 16:00,2012-08-26 08:00,2012-09-06 16:00,2012-08-26 08:00,2012-09-06 16:00,,2013-09-15 08:00,2013-09-26 16:00,,PT_Normal,,,,,b3gqphPrM0uDC+4FCjMcZQ,,,,N,0,0,,,2012-06-19 11:46,2012-06-20 09:59,admin,admin
684,144692,5115,22843,6085,1,100,N,N,N,CP_Drtn,TT_Task,DT_FixedDUR2,RV_OK,TK_Complete,4229EIN120,Instrument layouts -Approval,,,,0,0,0,0,120,0,0,0,,2011-11-22 00:00,2011-12-15 00:00,2013-09-26 16:00,2013-09-26 16:00,,2012-06-02 00:00,2012-06-02 00:00,,,2011-12-04 08:00,2011-12-22 16:00,,,,,PT_Normal,,,,,QwjOg4ihNkmb3aUTj0sVJg,,,,N,0,0,,,2012-06-19 11:46,2012-06-20 10:09,admin,admin
685,144693,5115,22843,6085,1,100,N,N,N,CP_Drtn,TT_Task,DT_FixedDUR2,RV_OK,TK_Complete,4229EIN270,Instrument layouts -Design,,,,0,0,0,0,0,0,0,0,,2012-01-29 08:00,2012-02-16 00:00,2013-09-26 16:00,2013-09-26 16:00,,2012-06-02 00:00,2012-06-02 00:00,,,2012-01-29 08:00,2012-01-29 08:00,,,,,PT_Normal,,,,,QSY8khfAgU+0LrsN0ZuLsA,,,,N,0,0,,,2012-06-19 11:46,2012-06-20 10:09,admin,admin
686,144694,5115,22843,6085,1,0,N,N,N,CP_Drtn,TT_Task,DT_FixedDUR2,RV_OK,TK_Active,4229EIN580,Instrument loop diagram-Design,,2656,0,16,0,0,0,80,0,0,0,,2012-03-28 00:00,,2013-09-24 08:00,2013-09-25 16:00,2012-06-04 16:00,2012-06-03 08:00,2012-06-04 16:00,2012-06-03 08:00,2012-06-04 16:00,2012-04-01 08:00,2012-04-12 16:00,,2013-09-24 08:00,2013-09-25 16:00,,PT_Normal,,,,,H80YTbP1qEig3fc8jDDluA,,,,N,0,0,,,2012-06-19 11:46,2012-06-20 09:59,admin,admin
687,144695,5115,22843,6085,1,100,N,N,N,CP_Drtn,TT_Task,DT_FixedDUR2,RV_OK,TK_Complete,4229EIN570,Instrument loop Diagram-Approval,,,,0,0,0,0,8,0,0,0,,2012-02-22 00:00,2012-02-26 00:00,2013-09-24 08:00,2013-09-24 08:00,,2012-06-02 00:00,2012-06-02 00:00,,,2012-03-04 08:00,2012-03-04 16:00,,,,,PT_Normal,,,,,1bSNGkT9Y0qlibYKh1ne6w,,,,N,0,0,,,2012-06-19 11:46,2012-06-20 10:09,admin,admin
688,144696,5115,22843,6085,1,0,N,N,N,CP_Drtn,TT_Task,DT_FixedDUR2,RV_OK,TK_NotStart,4229EIN590,Instrument loop diagram-Construction,,2328,1032,8,0,0,0,8,0,0,0,,,,2013-09-26 08:00,2013-09-26 16:00,,2012-08-01 08:00,2012-08-01 16:00,2012-08-01 08:00,2012-08-01 16:00,2012-08-01 08:00,2012-08-01 16:00,,2013-09-26 08:00,2013-09-26 16:00,,PT_Normal,,,,,AMbkIJq8g0SqVs01EXASBA,,,,N,0,0,,,2012-06-19 11:46,2012-06-20 09:59,admin,admin
689,144697,5115,22843,6085,1,100,N,N,N,CP_Drtn,TT_Task,DT_FixedDUR2,RV_OK,TK_Complete,4229EIN60,Instrument index -Approval,,,,0,0,0,0,40,0,0,0,,2011-10-26 00:00,2011-11-20 00:00,2013-09-26 16:00,2013-09-26 16:00,,2012-06-02 00:00,2012-06-02 00:00,,,2011-10-30 08:00,2011-11-03 16:00,,,,,PT_Normal,,,,,9gH3ppTC3UW2sfJtDeGy6A,,,,N,0,0,,,2012-06-19 11:46,2012-06-20 10:09,admin,admin
690,144698,5115,22843,6085,1,100,N,N,N,CP_Drtn,TT_Task,DT_FixedDUR2,RV_OK,TK_Complete,4229EIN200,Instrument cable / tubing schedule for approval,,,,0,0,0,0,40,0,0,0,2012-01-09 08:00,2012-01-05 00:00,2012-01-11 00:00,2013-09-24 08:00,2013-09-24 08:00,,2012-06-02 00:00,2012-06-02 00:00,,,2012-01-09 08:00,2012-01-15 16:00,,,,CS_MSOA,PT_Normal,,,,,oT9q4TtZaU26CNzlnJQ4QA,+fuN/Ikg/kK9fNQ0HqYtyQ,,,N,0,0,,,2012-06-19 11:46,2012-06-20 10:09,admin,admin
691,144699,5115,22843,6085,1,0,N,N,N,CP_Drtn,TT_Task,DT_FixedDUR2,RV_OK,TK_NotStart,4229EIN470,Instrument cable / tubing schedule for construction,,2240,944,40,0,0,0,40,0,0,0,,,,2013-09-22 08:00,2013-09-26 16:00,,2012-08-12 08:00,2012-08-16 16:00,2012-08-12 08:00,2012-08-16 16:00,2012-08-12 08:00,2012-08-16 16:00,,2013-09-22 08:00,2013-09-26 16:00,,PT_Normal,,,,,L/zOxhpI1kWO19ohKmA3UQ,MFJOUGZvAkSTBODSA6uthQ,,,N,0,0,,,2012-06-19 11:46,2012-06-20 09:59,admin,admin
692,144700,5115,22843,6085,1,0,N,N,N,CP_Drtn,TT_Task,DT_FixedDUR2,RV_OK,TK_NotStart,4229EIN450,Instrument layouts -Construction,,2200,0,80,0,0,0,80,0,0,0,,,,2013-08-25 08:00,2013-09-05 16:00,,2012-07-22 08:00,2012-08-02 16:00,2012-07-22 08:00,2012-08-02 16:00,2012-07-22 08:00,2012-08-02 16:00,,2013-08-25 08:00,2013-09-05 16:00,,PT_Normal,,,,,YkkFhW9Ku06ZFpYnHNpUhw,,,,N,0,0,,,2012-06-19 11:46,2012-06-20 09:59,admin,admin
693,144701,5115,22843,6085,1,100,N,N,N,CP_Drtn,TT_Task,DT_FixedDUR2,RV_OK,TK_Complete,4229EIN100,Functional loop diagram-Approval,,,,0,0,0,0,120,0,0,0,,2012-01-05 00:00,2012-01-11 00:00,2013-09-24 08:00,2013-09-24 08:00,,2012-06-02 00:00,2012-06-02 00:00,,,2012-01-17 08:00,2012-02-07 16:00,,,,,PT_Normal,,,,,XSD0UY4aUEaRl6q2yDmuhA,,,,N,0,0,,,2012-06-19 11:46,2012-06-20 10:09,admin,admin
694,144702,5115,22843,6085,1,100,N,N,N,CP_Drtn,TT_Task,DT_FixedDUR2,RV_OK,TK_Complete,4229EIN240,Functional loop diagram-Design,,,,0,0,0,0,48,0,0,0,,2012-01-15 00:00,2012-02-27 00:00,2013-09-26 16:00,2013-09-26 16:00,,2012-06-02 00:00,2012-06-02 00:00,,,2012-03-04 08:00,2012-03-11 16:00,,,,,PT_Normal,,,,,nuzmKV2rZUm64hTSmre8+g,,,,N,0,0,,,2012-06-19 11:46,2012-06-20 10:09,admin,admin
695,144703,5115,22843,6085,1,0,N,N,N,CP_Drtn,TT_Task,DT_FixedDUR2,RV_OK,TK_NotStart,4229EIN420,Functional loop diagram-Construction,,2328,0,120,0,0,0,120,0,0,0,,,,2013-09-05 08:00,2013-09-25 16:00,,2012-07-11 08:00,2012-07-31 16:00,2012-07-11 08:00,2012-07-31 16:00,2012-07-11 08:00,2012-07-31 16:00,,2013-09-05 08:00,2013-09-25 16:00,,PT_Normal,,,,,VSRhrkRmKkGb4vFqQmP6pw,,,,N,0,0,,,2012-06-19 11:46,2012-06-20 09:59,admin,admin
696,144704,5115,22843,6085,1,100,N,N,N,CP_Drtn,TT_Task,DT_FixedDUR2,RV_OK,TK_Complete,4229EIN520,Instrument wiring diagram-Approval,,,,0,0,0,0,80,0,0,0,,2011-12-09 00:00,2011-12-14 00:00,2013-09-24 08:00,2013-09-24 08:00,,2012-06-02 00:00,2012-06-02 00:00,,,2012-01-11 08:00,2012-01-24 16:00,,,,,PT_Normal,,,,,lbGsOjKTqkmQwPpmOE6eAA,,,,N,0,0,,,2012-06-19 11:46,2012-06-20 10:09,admin,admin
697,144705,5115,22843,6085,1,100,N,N,N,CP_Drtn,TT_Task,DT_FixedDUR2,RV_OK,TK_Complete,4229EIN530,Instrument wiring diagram-Design,,,,0,0,0,0,80,0,0,0,,2012-01-15 00:00,2012-01-24 00:00,2013-09-26 16:00,2013-09-26 16:00,,2012-06-02 00:00,2012-06-02 00:00,,,2012-02-13 08:00,2012-02-26 16:00,,,,,PT_Normal,,,,,A8SULwxTZ0e/TxD94MgM4w,,,,N,0,0,,,2012-06-19 11:46,2012-06-20 10:09,admin,admin
698,144706,5115,22843,6085,1,100,N,N,N,CP_Drtn,TT_Task,DT_FixedDUR2,RV_OK,TK_Complete,4229EIN280,Instrument cable / tubing routing layouts IFD,,,,0,0,0,0,64,0,0,0,,2012-02-29 00:00,2012-02-29 00:00,2013-04-15 08:00,2013-04-15 08:00,,2012-06-02 00:00,2012-06-02 00:00,,,2012-03-04 08:00,2012-03-13 16:00,,,,,PT_Normal,,,,,/Q8SxvsHKEuTpKyNjMjyiQ,,,,N,0,0,,,2012-06-19 11:46,2012-06-20 10:09,admin,admin
699,144707,5115,22843,6085,1,100,N,N,N,CP_Drtn,TT_Task,DT_FixedDUR2,RV_OK,TK_Complete,4229EIN190,Instrument hook-ups issued for approval,,,,0,0,0,0,80,0,0,0,,2011-12-12 08:00,2012-01-02 00:00,2013-09-26 16:00,2013-09-26 16:00,,2012-06-02 00:00,2012-06-02 00:00,,,2011-12-12 08:00,2011-12-25 16:00,,,,,PT_Normal,,,,,qJAxUnOwnk+3hEK5Y8rwsA,,,,N,0,0,,,2012-06-19 11:46,2012-06-20 10:09,admin,admin
700,144708,5115,22845,6085,1,0,N,N,N,CP_Drtn,TT_Task,DT_FixedDUR2,RV_OK,TK_Active,4229EIN610,Additional shutdown valves T.E.R,,1280,0,112,0,0,0,112,0,0,0,,2012-05-27 00:00,,2013-01-27 08:00,2013-02-13 16:00,,2012-06-03 08:00,2012-06-20 16:00,2012-06-03 08:00,2012-06-20 16:00,2012-05-31 08:00,2012-06-19 16:00,,2013-01-27 08:00,2013-02-13 16:00,,PT_Normal,,,,,EwltSVNovU2nOMVcr8887Q,,,,N,0,0,,,2012-06-19 11:46,2012-06-20 09:59,admin,admin
701,144709,5115,22845,6085,1,0,N,N,N,CP_Drtn,TT_Task,DT_FixedDUR2,RV_OK,TK_NotStart,4229EIN620,Additional shutdown valves MRP,,2320,0,40,0,0,0,40,0,0,0,,,,2013-09-11 08:00,2013-09-17 16:00,,2012-07-18 08:00,2012-07-24 16:00,2012-07-18 08:00,2012-07-24 16:00,2012-07-18 08:00,2012-07-24 16:00,,2013-09-11 08:00,2013-09-17 16:00,,PT_Normal,,,,,77W3dvCXa02UejCj2S+7Hw,,,,N,0,0,,,2012-06-19 11:46,2012-06-20 09:59,admin,admin
702,144710,5115,22845,6085,1,100,N,N,N,CP_Drtn,TT_Task,DT_FixedDUR2,RV_OK,TK_Complete,4229EIN600,Additional shutdown valves MRQ,,,,0,0,0,0,80,0,0,0,,2012-04-29 08:00,2012-05-06 00:00,2013-01-26 16:00,2013-01-26 16:00,,2012-06-02 00:00,2012-06-02 00:00,,,2012-04-29 08:00,2012-05-10 16:00,,,,,PT_Normal,,,,,l1diSZ5UmUW9zkVsULaATg,,,,N,0,0,,,2012-06-19 11:46,2012-06-20 10:09,admin,admin
703,144711,5115,22845,6085,1,0,N,N,N,CP_Drtn,TT_Task,DT_FixedDUR2,RV_OK,TK_Active,4229EPR300,V.P.R for Shutdown valves,,1896,600,680,0,0,0,680,0,0,0,,2012-04-29 00:00,,2013-06-02 08:00,2013-09-26 16:00,,2012-06-20 08:00,2012-10-30 16:00,2012-06-20 08:00,2012-10-30 16:00,2012-06-20 08:00,2012-10-30 16:00,,2013-06-02 08:00,2013-09-26 16:00,,PT_Normal,,,,,E1XjaiTkvUyd1L3AHDzmAA,,,,N,0,0,,,2012-06-19 11:46,2012-06-20 09:59,admin,admin
704,144712,5115,22845,6085,1,100,N,N,N,CP_Drtn,TT_Task,DT_FixedDUR2,RV_OK,TK_Complete,4229EIN550,V.P.R for Instrument Mechanical bulk,,,,0,0,0,0,240,0,0,0,,2012-05-31 00:00,2012-05-31 00:00,2013-09-26 16:00,2013-09-26 16:00,,2012-06-02 00:00,2012-06-02 00:00,,,2012-07-22 08:00,2012-09-06 16:00,,,,,PT_Normal,,,,,2+gQStYCjUqGGythZA2YdA,,,,N,0,0,,,2012-06-19 11:46,2012-06-20 10:09,admin,admin
705,144713,5115,22845,6085,1,0,N,N,N,CP_Drtn,TT_Task,DT_FixedDUR2,RV_OK,TK_NotStart,4229EIN560,V.P.R for Instrument Electrical bulk,,1968,672,160,0,0,0,160,0,0,0,,,,2013-09-01 08:00,2013-09-26 16:00,,2012-09-13 08:00,2012-10-10 16:00,2012-09-13 08:00,2012-10-10 16:00,2012-09-13 08:00,2012-10-10 16:00,,2013-09-01 08:00,2013-09-26 16:00,,PT_Normal,,,,,jzaTUVpHMkS2rr6RWCscEg,,,,N,0,0,,,2012-06-19 11:46,2012-06-20 09:59,admin,admin
706,144714,5115,22845,6085,1,0,N,N,N,CP_Drtn,TT_Task,DT_FixedDUR2,RV_OK,TK_NotStart,4229EIN540,V.P.R for field instruments,,1896,600,280,0,0,0,280,0,0,0,,,,2013-08-11 08:00,2013-09-26 16:00,,2012-09-05 08:00,2012-10-30 16:00,2012-09-05 08:00,2012-10-30 16:00,2012-09-05 08:00,2012-10-30 16:00,,2013-08-11 08:00,2013-09-26 16:00,,PT_Normal,,,,,WztQPD3byUetR32SVODEQQ,,,,N,0,0,,,2012-06-19 11:46,2012-06-20 09:59,admin,admin
707,144715,5115,22845,6085,1,100,N,N,N,CP_Drtn,TT_Task,DT_FixedDUR2,RV_OK,TK_Complete,4229EIN80,T.E.R for  SGS,,,,0,0,0,0,200,0,0,0,,2011-09-28 08:00,2012-01-09 16:00,2013-01-14 08:00,2013-01-14 08:00,,2012-06-02 00:00,2012-06-02 00:00,,,2011-09-28 08:00,2011-11-02 16:00,,,,,PT_Normal,,,,,0xgw21GiJ02Mb4jmEZifRg,+adQvSlUzkOZha6HG7fiRA,,,N,0,0,,,2012-06-19 11:46,2012-06-20 10:09,admin,admin
708,144716,5115,22845,6085,1,100,N,N,N,CP_Drtn,TT_Task,DT_FixedDUR2,RV_OK,TK_Complete,4229EIN210,MRP for SGS,,,,0,0,0,0,40,0,0,0,,2012-03-08 08:00,2012-05-08 00:00,2013-01-14 08:00,2013-01-14 08:00,,2012-06-02 00:00,2012-06-02 00:00,,,2012-03-08 08:00,2012-03-14 16:00,,,,,PT_Normal,,,,,o1NFLVflvkSk7VRIi+ZSFw,uCQ7t7XtkE2pu5tmschigw,,,N,0,0,,,2012-06-19 11:46,2012-06-20 10:09,admin,admin
709,144717,5115,22845,6085,1,100,N,N,N,CP_Drtn,TT_Task,DT_FixedDUR2,RV_OK,TK_Complete,4229EIN10,Issue MRQ for SGS,,,,0,0,0,0,64,0,0,0,,2011-08-15 08:00,2011-08-24 16:00,2013-01-14 08:00,2013-01-14 08:00,,2012-06-02 00:00,2012-06-02 00:00,,,2011-08-15 08:00,2011-08-24 16:00,,,,,PT_Normal,,,,,zuhz3Sv2m06JVi5Htx5cNw,fa+QQs2lrkWif6ZY5ZmI+Q,,,N,0,0,,,2012-06-19 11:46,2012-06-20 10:09,admin,admin
710,144718,5115,22845,6085,1,100,N,N,N,CP_Drtn,TT_Task,DT_FixedDUR2,RV_OK,TK_Complete,4229EIN220,T.E.R for SDV,,,,0,0,0,0,160,0,0,0,,2011-11-28 00:00,2012-02-01 00:00,2013-09-26 16:00,2013-09-26 16:00,,2012-06-02 00:00,2012-06-02 00:00,,,2011-12-04 08:00,2011-12-29 16:00,,,,,PT_Normal,,,,,NqnO7INRxEOWG8d0pg8Tyw,QZSem8n3HEqSrXo4nZ4rrA,,,N,0,0,,,2012-06-19 11:47,2012-06-20 10:09,admin,admin
711,144719,5115,22845,6085,1,100,N,N,N,CP_Drtn,TT_Task,DT_FixedDUR2,RV_OK,TK_Complete,4229EIN330,MRP for SDV,,,,0,0,0,0,40,0,0,0,,2012-04-22 00:00,2012-04-26 00:00,2013-01-14 08:00,2013-01-14 08:00,,2012-06-02 00:00,2012-06-02 00:00,,,2012-04-29 08:00,2012-05-03 16:00,,,,,PT_Normal,,,,,gMoYUb6dGEWETl05yRR9kw,ulMsewoMhEiApbF+oxOLEA,,,N,0,0,,,2012-06-19 11:47,2012-06-20 10:09,admin,admin
712,144720,5115,22845,6085,1,100,N,N,N,CP_Drtn,TT_Task,DT_FixedDUR2,RV_OK,TK_Complete,4229EIN50,Issue MRQ for SDV,,,,0,0,0,0,40,0,0,0,,2011-10-12 08:48,2011-10-26 00:00,2013-09-26 16:00,2013-09-26 16:00,,2012-06-02 00:00,2012-06-02 00:00,,,2011-10-12 08:48,2011-10-19 08:48,,,,,PT_Normal,,,,,abfHEOuxPkOwx51cbbX+eg,oARo+yhXM0mbfyeEpyVYrw,,,N,0,0,,,2012-06-19 11:47,2012-06-20 10:09,admin,admin
713,144721,5115,22845,6085,1,0,N,N,N,CP_Drtn,TT_Task,DT_FixedDUR2,RV_OK,TK_NotStart,4229EIN500,V.P.R for choke valves,,1688,544,720,0,0,0,720,0,0,0,,,,2013-05-26 08:00,2013-09-26 16:00,,2012-07-19 08:00,2012-12-05 16:00,2012-07-19 08:00,2012-12-05 16:00,2012-07-19 08:00,2012-12-05 16:00,,2013-05-26 08:00,2013-09-26 16:00,,PT_Normal,,,,,KHfSXlIC3kOz9rIG7HAGGg,,,,N,0,0,,,2012-06-19 11:47,2012-06-20 09:59,admin,admin
714,144722,5115,22845,6085,1,0,N,N,N,CP_Drtn,TT_Task,DT_FixedDUR2,RV_OK,TK_NotStart,4229EIN510,V.P.R for Pressure regulator valves,,1760,616,720,0,0,0,720,0,0,0,,,,2013-05-26 08:00,2013-09-26 16:00,,2012-07-08 08:00,2012-11-22 16:00,2012-07-08 08:00,2012-11-22 16:00,2012-07-08 08:00,2012-11-22 16:00,,2013-05-26 08:00,2013-09-26 16:00,,PT_Normal,,,,,GtSgp91SLEOCqiGEoYjnLQ,,,,N,0,0,,,2012-06-19 11:47,2012-06-20 09:59,admin,admin
715,144723,5115,22845,6085,1,0,N,N,N,CP_Drtn,TT_Task,DT_FixedDUR2,RV_OK,TK_Active,4229EIN490,V.P.R for MPFM,,1960,816,720,0,0,0,720,0,0,0,,2012-03-08 00:00,,2013-05-26 08:00,2013-09-26 16:00,,2012-06-03 08:00,2012-10-11 16:00,2012-06-03 08:00,2012-10-11 16:00,2012-05-06 08:00,2012-09-13 16:00,,2013-05-26 08:00,2013-09-26 16:00,,PT_Normal,,,,,Y0BSs5Kdzk+GRNHuA2xfsg,,,,N,0,0,,,2012-06-19 11:47,2012-06-20 09:59,admin,admin
716,144724,5115,22845,6085,1,0,N,N,N,CP_Drtn,TT_Task,DT_FixedDUR2,RV_OK,TK_Active,4229EIN480,V.P.R for safeguard system,,1944,0,480,0,0,0,640,0,0,0,,2012-05-10 00:00,,2013-07-07 08:00,2013-09-26 16:00,,2012-07-17 08:00,2012-10-15 16:00,2012-07-17 08:00,2012-10-15 16:00,2012-06-25 08:00,2012-10-28 16:00,,2013-07-07 08:00,2013-09-26 16:00,,PT_Normal,,,,,asLcF+2++0iQcxoMQwA9MA,,,,N,0,0,,,2012-06-19 11:47,2012-06-20 09:59,admin,admin
717,144725,5115,22845,6085,1,0,N,N,N,CP_Drtn,TT_Task,DT_FixedDUR2,RV_OK,TK_Active,4229EIN360,T.E.R for Instrument electrical bulk,,1728,0,8,0,0,0,120,0,0,0,,2012-03-26 00:00,,2013-04-15 08:00,2013-04-15 16:00,2012-06-03 16:00,2012-06-03 08:00,2012-06-03 16:00,2012-06-03 08:00,2012-06-03 16:00,2012-04-25 08:00,2012-05-15 16:00,,2013-04-15 08:00,2013-04-15 16:00,,PT_Normal,,,,,NvOwdydlwU+T9WtN5ZtKpg,ErUDIEAHkEWZWIjcmb+Ptg,,,N,0,0,,,2012-06-19 11:47,2012-06-20 09:59,admin,admin
718,144726,5115,22845,6085,1,0,N,N,N,CP_Drtn,TT_Task,DT_FixedDUR2,RV_OK,TK_NotStart,4229EIN380,MRP for Instrument electrical bulk,,1728,0,40,0,0,0,40,0,0,0,,,,2013-05-14 08:00,2013-05-20 16:00,,2012-07-02 08:00,2012-07-08 16:00,2012-07-02 08:00,2012-07-08 16:00,2012-07-02 08:00,2012-07-08 16:00,,2013-05-14 08:00,2013-05-20 16:00,,PT_Normal,,,,,FzJIoo32hUebgv00cTga4Q,qah8G7VN60mBQqGfXfCzXw,,,N,0,0,,,2012-06-19 11:47,2012-06-20 09:59,admin,admin
719,144727,5115,22845,6085,1,100,N,N,N,CP_Drtn,TT_Task,DT_FixedDUR2,RV_OK,TK_Complete,4229EIN230,Issue MRQ for Instrument electrical bulk,,,,0,0,0,0,80,0,0,0,2012-01-16 00:00,2012-01-16 08:00,2012-02-27 00:00,2013-04-15 08:00,2013-04-15 08:00,,2012-06-02 00:00,2012-06-02 00:00,,,2012-01-16 08:00,2012-01-30 16:00,,,,CS_MSOA,PT_Normal,,,,,Ft3h53zOnUWBmgEFuNHemw,azlRJTqqs0W0Ln7rWFbhVg,,,N,0,0,,,2012-06-19 11:47,2012-06-20 10:09,admin,admin
720,144728,5115,22845,6085,1,100,N,N,N,CP_Drtn,TT_Task,DT_FixedDUR2,RV_OK,TK_Complete,4229EIN340,T.E.R for Instrument  Mechanical bulk,,,,0,0,0,0,120,0,0,0,,2012-03-27 00:00,2012-03-27 00:00,2013-08-15 08:00,2013-08-15 08:00,,2012-06-02 00:00,2012-06-02 00:00,,,2012-04-01 08:00,2012-04-19 16:00,,,,,PT_Normal,,,,,eoYpj3PYMUKJWrE66/+OrQ,4hM7c1CEokC8T6AEFK3z1g,,,N,0,0,,,2012-06-19 11:47,2012-06-20 10:09,admin,admin
721,144729,5115,22845,6085,1,100,N,N,N,CP_Drtn,TT_Task,DT_FixedDUR2,RV_OK,TK_Complete,4229EIN370,MRP for Instrument Mechanical bulk,,,,0,0,0,0,40,0,0,0,,2012-05-31 00:00,2012-05-31 16:00,2013-08-15 08:00,2013-08-15 08:00,,2012-06-02 00:00,2012-06-02 00:00,,,2012-05-27 08:00,2012-05-31 16:00,,,,,PT_Normal,,,,,eITcA1rCrkyp/haVrbVubQ,qQiaMneyqke6pEtTAv4l9g,,,N,0,0,,,2012-06-19 11:47,2012-06-20 10:09,admin,admin
722,144730,5115,22845,6085,1,100,N,N,N,CP_Drtn,TT_Task,DT_FixedDUR2,RV_OK,TK_Complete,4229EIN180,Issue MRQ for Instrument mechanical bulk,,,,0,0,0,0,80,0,0,0,,2012-01-08 08:00,2012-02-19 00:00,2013-08-15 08:00,2013-08-15 08:00,,2012-06-02 00:00,2012-06-02 00:00,,,2012-01-08 08:00,2012-01-19 16:00,,,,,PT_Normal,,,,,t+Btxz49wUKAh4goFlusDw,xkY73sBs+E6w0i1R8ODp4g,,,N,0,0,,,2012-06-19 11:47,2012-06-20 10:09,admin,admin
723,144731,5115,22845,6085,1,100,N,N,N,CP_Drtn,TT_Task,DT_FixedDUR2,RV_OK,TK_Complete,4229EIN250,T.E.R for field Instrument,,,,0,0,0,0,120,0,0,0,2012-01-17 00:00,2012-01-17 08:00,2012-05-02 16:00,2013-03-18 16:00,2013-03-18 16:00,,2012-06-02 00:00,2012-06-02 00:00,,,2012-01-17 08:00,2012-02-07 16:00,,,,CS_MSOA,PT_Normal,,,,,kKx0A/cRmkOg4UhbT2LuqQ,+adQvSlUzkOZha6HG7fiRA,,,N,0,0,,,2012-06-19 11:47,2012-06-20 10:09,admin,admin
724,144732,5115,22845,6085,1,0,N,N,N,CP_Drtn,TT_Task,DT_FixedDUR2,RV_OK,TK_NotStart,4229EIN350,MRP for field Instrument,,1576,0,40,0,0,0,40,0,0,0,,,,2013-04-09 08:00,2013-04-15 16:00,,2012-06-24 08:00,2012-06-28 16:00,2012-06-24 08:00,2012-06-28 16:00,2012-06-24 08:00,2012-06-28 16:00,,2013-04-09 08:00,2013-04-15 16:00,,PT_Normal,,,,,uXeBZnOs8EKnrprQxwChFw,uCQ7t7XtkE2pu5tmschigw,,,N,0,0,,,2012-06-19 11:47,2012-06-20 09:59,admin,admin
725,144733,5115,22845,6085,1,100,N,N,N,CP_Drtn,TT_Task,DT_FixedDUR2,RV_OK,TK_Complete,4229EIN90,Issue MRQ for field Instrument,,,,0,0,0,0,40,0,0,0,,2011-11-16 00:00,2011-12-13 00:00,2013-03-18 16:00,2013-03-18 16:00,,2012-06-02 00:00,2012-06-02 00:00,,,2011-12-04 08:00,2011-12-08 16:00,,,,,PT_Normal,,,,,AXeiCLnQs0+LXEKm9IL8MQ,fa+QQs2lrkWif6ZY5ZmI+Q,,,N,0,0,,,2012-06-19 11:47,2012-06-20 10:09,admin,admin
726,144734,5115,22845,6085,1,100,N,N,N,CP_Drtn,TT_Task,DT_FixedDUR2,RV_OK,TK_Complete,4229EIN170,T.E.R for choke valves,,,,0,0,0,0,160,0,0,0,,2011-12-27 00:00,2012-04-03 00:00,2013-01-20 16:00,2013-01-20 16:00,,2012-06-02 00:00,2012-06-02 00:00,,,2012-01-01 08:00,2012-01-29 16:00,,,,,PT_Normal,,,,,TTU5dwfOME2XO9lG310bMA,+adQvSlUzkOZha6HG7fiRA,,,N,0,0,,,2012-06-19 11:47,2012-06-20 10:09,admin,admin
727,144735,5115,22845,6085,1,0,N,N,N,CP_Drtn,TT_Task,DT_FixedDUR2,RV_OK,TK_Active,4229EIN290,MRP for Choke valves,,1704,0,16,0,0,0,40,0,0,0,,2012-05-27 00:00,,2013-04-10 08:00,2013-04-11 16:00,,2012-06-03 08:00,2012-06-04 16:00,2012-06-03 08:00,2012-06-04 16:00,2012-06-03 08:00,2012-06-07 16:00,,2013-04-10 08:00,2013-04-11 16:00,,PT_Normal,,,,,NXW2IpFvm0eJBMzhgXqRjA,uCQ7t7XtkE2pu5tmschigw,,,N,0,0,,,2012-06-19 11:47,2012-06-20 09:59,admin,admin
728,144736,5115,22845,6085,1,100,N,N,N,CP_Drtn,TT_Task,DT_FixedDUR2,RV_OK,TK_Complete,4229EIN40,Issue MRQ for Choke valves,,,,0,0,0,0,40,0,0,0,,2011-10-10 08:48,2011-11-24 00:00,2013-01-20 16:00,2013-01-20 16:00,,2012-06-02 00:00,2012-06-02 00:00,,,2011-10-10 08:48,2011-10-17 08:48,,,,,PT_Normal,,,,,vh6VoiGcXUqqYmIhpBEI9w,fa+QQs2lrkWif6ZY5ZmI+Q,,,N,0,0,,,2012-06-19 11:47,2012-06-20 10:09,admin,admin
729,144737,5115,22845,6085,1,100,N,N,N,CP_Drtn,TT_Task,DT_FixedDUR2,RV_OK,TK_Complete,4229EIN160,T.E.R for  Pressure regulator valves,,,,0,0,0,0,120,0,0,0,,2012-02-02 00:00,2012-04-03 00:00,2013-01-13 16:00,2013-01-13 16:00,,2012-06-02 00:00,2012-06-02 00:00,,,2012-03-08 08:00,2012-03-28 16:00,,,,,PT_Normal,,,,,DGVIH3yWeUeNSmjvEj43Fw,+adQvSlUzkOZha6HG7fiRA,,,N,0,0,,,2012-06-19 11:47,2012-06-20 10:09,admin,admin
730,144738,5115,22845,6085,1,0,N,N,N,CP_Drtn,TT_Task,DT_FixedDUR2,RV_OK,TK_Active,4229EIN320,MRP for  pressure regulator valves,,1208,0,24,0,0,0,40,0,0,0,,2012-05-27 00:00,,2013-01-14 08:00,2013-01-16 16:00,,2012-06-03 08:00,2012-06-05 16:00,2012-06-03 08:00,2012-06-05 16:00,2012-06-03 08:00,2012-06-07 16:00,,2013-01-14 08:00,2013-01-16 16:00,,PT_Normal,,,,,jluiYTq5HEGywfSrFzOXdg,uCQ7t7XtkE2pu5tmschigw,,,N,0,0,,,2012-06-19 11:47,2012-06-20 09:59,admin,admin
731,144739,5115,22845,6085,1,100,N,N,N,CP_Drtn,TT_Task,DT_FixedDUR2,RV_OK,TK_Complete,4229EIN30,Issue MRQ for Pressure regulator valves,,,,0,0,0,0,24,0,0,0,,2011-10-03 08:48,2011-10-09 08:48,2013-01-13 16:00,2013-01-13 16:00,,2012-06-02 00:00,2012-06-02 00:00,,,2011-10-03 08:48,2011-10-09 08:48,,,,,PT_Normal,,,,,7yI2QP5LLUO83VRwNV4fUA,fa+QQs2lrkWif6ZY5ZmI+Q,,,N,0,0,,,2012-06-19 11:47,2012-06-20 10:09,admin,admin
732,144740,5115,22845,6085,1,100,N,N,N,CP_Drtn,TT_Task,DT_FixedDUR2,RV_OK,TK_Complete,4229EIN110,T.E.R for MPFM,,,,0,0,0,0,160,0,0,0,,2011-11-14 00:00,2011-12-21 00:00,2012-12-31 08:00,2012-12-31 08:00,,2012-06-02 00:00,2012-06-02 00:00,,,2011-12-04 08:00,2011-12-29 16:00,,,,,PT_Normal,,,,,ia8LDTMD/kCibaqhQdXrag,+adQvSlUzkOZha6HG7fiRA,,,N,0,0,,,2012-06-19 11:47,2012-06-20 10:09,admin,admin
733,144741,5115,22845,6085,1,100,N,N,N,CP_Drtn,TT_Task,DT_FixedDUR2,RV_OK,TK_Complete,4229EIN260,MRP for MPFM,,,,0,0,0,0,40,0,0,0,,2012-02-09 00:00,2012-02-20 00:00,2012-12-31 08:00,2012-12-31 08:00,,2012-06-02 00:00,2012-06-02 00:00,,,2012-03-04 08:00,2012-03-08 16:00,,,,,PT_Normal,,,,,WI6iRCjbQE6SBN3dixvcog,uCQ7t7XtkE2pu5tmschigw,,,N,0,0,,,2012-06-19 11:47,2012-06-20 10:09,admin,admin
734,144742,5115,22845,6085,1,100,N,N,N,CP_Drtn,TT_Task,DT_FixedDUR2,RV_OK,TK_Complete,4229EIN20,Issue MRQ for MPFM,,,,0,0,0,0,40,0,0,0,,2011-09-29 08:00,2011-10-04 00:00,2012-12-31 08:00,2012-12-31 08:00,,2012-06-02 00:00,2012-06-02 00:00,,,2011-09-29 08:00,2011-10-05 16:00,,,,,PT_Normal,,,,,m0w4X/dpHkGYZc9jifh8Lg,fa+QQs2lrkWif6ZY5ZmI+Q,,,N,0,0,,,2012-06-19 11:47,2012-06-20 10:09,admin,admin
735,144743,5115,22847,6085,1,100,N,N,N,CP_Drtn,TT_Task,DT_FixedDUR2,RV_OK,TK_Complete,4229EPL290,"18"""" spool arangement drawing -Design",,,,0,0,0,0,120,0,0,0,,2011-12-29 00:00,2012-02-13 00:00,2013-09-19 08:00,2013-09-19 08:00,,2012-06-02 00:00,2012-06-02 00:00,,,2012-01-01 08:00,2012-01-19 16:00,,,,,PT_Normal,,,,,bejnBRDbjkGPAmB4WTFOiw,,,,N,0,0,,,2012-06-19 11:47,2012-06-20 10:09,admin,admin
736,144744,5115,22847,6085,1,100,N,N,N,CP_Drtn,TT_Task,DT_FixedDUR2,RV_OK,TK_Complete,4229EPL390,"18"""" spool arangement drawing -Construction",,,,0,0,0,0,120,0,0,0,,2012-03-18 00:00,2012-03-27 00:00,2013-09-19 08:00,2013-09-19 08:00,,2012-06-02 00:00,2012-06-02 00:00,,,2012-03-04 08:00,2012-03-22 16:00,,,,,PT_Normal,,,,,81qokPQVt0iNR4FvZvldVQ,,,,N,0,0,,,2012-06-19 11:47,2012-06-20 10:09,admin,admin
737,144745,5115,22847,6085,1,100,N,N,N,CP_Drtn,TT_Task,DT_FixedDUR2,RV_OK,TK_Complete,4229EPL170,"8"""" spool arrangement drawing -Approval",,,,0,0,0,0,120,0,0,0,,2011-11-23 00:00,2011-12-15 00:00,2013-09-15 08:00,2013-09-15 08:00,,2012-06-02 00:00,2012-06-02 00:00,,,2011-12-04 08:00,2011-12-22 16:00,,,,,PT_Normal,,,,,/MptWBysF0SCXGC1ik2vlw,jOOEz2anUU+9clXvBjEQhQ,,,N,0,0,,,2012-06-19 11:47,2012-06-20 10:09,admin,admin
738,144746,5115,22847,6085,1,100,N,N,N,CP_Drtn,TT_Task,DT_FixedDUR2,RV_OK,TK_Complete,4229EPL310,"8"""" spool arrangement drawing -Design",,,,0,0,0,0,120,0,0,0,,2011-12-29 00:00,2012-02-13 00:00,2013-09-19 08:00,2013-09-19 08:00,,2012-06-02 00:00,2012-06-02 00:00,,,2012-01-01 08:00,2012-01-19 16:00,,,,,PT_Normal,,,,,63HbZT4vj0yzXpvEj6P74w,0TGBIs4CqUS2FVJ2PYQVfA,,,N,0,0,,,2012-06-19 11:47,2012-06-20 10:09,admin,admin
739,144747,5115,22847,6085,1,100,N,N,N,CP_Drtn,TT_Task,DT_FixedDUR2,RV_OK,TK_Complete,4229EPL410,"8"""" spool arangement drawing -Construction",,,,0,0,0,0,120,0,0,0,,2012-03-18 00:00,2012-03-27 00:00,2013-09-19 08:00,2013-09-19 08:00,,2012-06-02 00:00,2012-06-02 00:00,,,2012-03-04 08:00,2012-03-22 16:00,,,,,PT_Normal,,,,,X+uPpKWH8kmTFmS6CkmBfw,8R1bdDNv6USkyU4V9lAC9w,,,N,0,0,,,2012-06-19 11:47,2012-06-20 10:09,admin,admin
740,144748,5115,22847,6085,1,100,N,N,N,CP_Drtn,TT_Task,DT_FixedDUR2,RV_OK,TK_Complete,4229EPL230,"8"""" riser arrangement drawing -Approval",,,,0,0,0,0,80,0,0,0,,2011-12-14 08:00,2011-12-28 00:00,2013-09-15 08:00,2013-09-15 08:00,,2012-06-02 00:00,2012-06-02 00:00,,,2011-12-14 08:00,2011-12-27 16:00,,,,,PT_Normal,,,,,/ew9mEjlDU2BMQ4HbmRNCw,8jUDyxPYdU2TST0Gh6JkUg,,,N,0,0,,,2012-06-19 11:47,2012-06-20 10:09,admin,admin
741,144749,5115,22847,6085,1,100,N,N,N,CP_Drtn,TT_Task,DT_FixedDUR2,RV_OK,TK_Complete,4229EPL330,"8"""" riser arrangement drawing -Design",,,,0,0,0,0,80,0,0,0,,2012-02-26 00:00,2012-02-29 00:00,2013-09-19 08:00,2013-09-19 08:00,,2012-06-02 00:00,2012-06-02 00:00,,,2012-03-13 08:00,2012-03-26 16:00,,,,,PT_Normal,,,,,mHLTsGuLb0ycwUpzrf1QFA,DqhkdzQg0USL5rbPHbkl1Q,,,N,0,0,,,2012-06-19 11:47,2012-06-20 10:09,admin,admin
742,144750,5115,22847,6085,1,100,N,N,N,CP_Drtn,TT_Task,DT_FixedDUR2,RV_OK,TK_Complete,4229EPL420,"8"""" riser arrangement drawing -Construction",,,,0,0,0,0,120,0,0,0,,2012-03-25 00:00,2012-04-19 00:00,2013-09-19 08:00,2013-09-19 08:00,,2012-06-02 00:00,2012-06-02 00:00,,,2012-04-01 08:00,2012-04-19 16:00,,,,,PT_Normal,,,,,eG+xyiAkgUm3cwMW9auWuw,w2TMQgyxDEm1NRXaCHdGig,,,N,0,0,,,2012-06-19 11:47,2012-06-20 10:09,admin,admin
743,144751,5115,22847,6085,1,100,N,N,N,CP_Drtn,TT_Task,DT_FixedDUR2,RV_OK,TK_Complete,4229EPL240,"18"""" riser arrangement drawing -Approval",,,,0,0,0,0,80,0,0,0,,2011-12-14 08:00,2011-12-28 00:00,2013-09-15 08:00,2013-09-15 08:00,,2012-06-02 00:00,2012-06-02 00:00,,,2011-12-14 08:00,2011-12-27 16:00,,,,,PT_Normal,,,,,25knFsbvyEC5naHYy+ksjA,c9vMafYWtkK1NGoiHIJ1wA,,,N,0,0,,,2012-06-19 11:47,2012-06-20 10:09,admin,admin
744,144752,5115,22847,6085,1,100,N,N,N,CP_Drtn,TT_Task,DT_FixedDUR2,RV_OK,TK_Complete,4229EPL350,"18"""" riser arrangement drawing -Design",,,,0,0,0,0,80,0,0,0,,2012-02-26 00:00,2012-02-29 00:00,2013-09-19 08:00,2013-09-19 08:00,,2012-06-02 00:00,2012-06-02 00:00,,,2012-03-13 08:00,2012-03-26 16:00,,,,,PT_Normal,,,,,WMYieOsnUk2WqZpRahnw2A,ducMrzoJrUqdTOcWLFVgnw,,,N,0,0,,,2012-06-19 11:47,2012-06-20 10:09,admin,admin
745,144753,5115,22847,6085,1,100,N,N,N,CP_Drtn,TT_Task,DT_FixedDUR2,RV_OK,TK_Complete,4229EPL430,"18"""" riser arrangement drawing -Construction",,,,0,0,0,0,120,0,0,0,,2012-03-25 00:00,2012-04-19 00:00,2013-09-19 08:00,2013-09-19 08:00,,2012-06-02 00:00,2012-06-02 00:00,,,2012-04-01 08:00,2012-04-19 16:00,,,,,PT_Normal,,,,,ZYoJ3xB/D0Cy6B9Zu+TXTA,VwsEWnSmS0O0TiUHBQD99w,,,N,0,0,,,2012-06-19 11:47,2012-06-20 10:09,admin,admin
746,144754,5115,22847,6085,1,100,N,N,N,CP_Drtn,TT_Task,DT_FixedDUR2,RV_OK,TK_Complete,4229EPL440,"18""""Spool ISO-IFC",,,,0,0,0,0,0,0,0,0,,2012-05-02 00:00,2012-05-29 00:00,2013-09-19 08:00,2013-09-19 08:00,,2012-06-02 00:00,2012-06-02 00:00,,,2012-06-03 08:00,2012-06-03 08:00,,,,,PT_Normal,,,,,Mrrzv/UwHUCvKHZwhjZ0sA,,,,N,0,0,,,2012-06-19 11:47,2012-06-20 10:09,admin,admin
747,144755,5115,22847,6085,1,100,N,N,N,CP_Drtn,TT_Task,DT_FixedDUR2,RV_OK,TK_Complete,4229EPL450,"8""""Spool ISO-IFC",,,,0,0,0,0,0,0,0,0,,2012-05-02 00:00,2012-05-29 00:00,2013-09-19 08:00,2013-09-19 08:00,,2012-06-02 00:00,2012-06-02 00:00,,,2012-06-03 08:00,2012-06-03 08:00,,,,,PT_Normal,,,,,wOpxzRZRzE2eikvGKN/V6A,QWvo4lzWEkeSB/GI9TalYQ,,,N,0,0,,,2012-06-19 11:47,2012-06-20 10:09,admin,admin
748,144756,5115,22847,6085,1,100,N,N,N,CP_Drtn,TT_Task,DT_FixedDUR2,RV_OK,TK_Complete,4229EPL460,"8""""Riser ISO-IFC",,,,0,0,0,0,0,0,0,0,,2012-05-02 00:00,2012-05-29 00:00,2013-09-19 08:00,2013-09-19 08:00,,2012-06-02 00:00,2012-06-02 00:00,,,2012-06-03 08:00,2012-06-03 08:00,,,,,PT_Normal,,,,,dhh46COiOUWriRlL1vnE4A,,,,N,0,0,,,2012-06-19 11:47,2012-06-20 10:09,admin,admin
749,144757,5115,22847,6085,1,100,N,N,N,CP_Drtn,TT_Task,DT_FixedDUR2,RV_OK,TK_Complete,4229EPL470,"18""""Riser ISO-IFC",,,,0,0,0,0,0,0,0,0,,2012-05-02 00:00,2012-05-29 00:00,2013-09-19 08:00,2013-09-19 08:00,,2012-06-02 00:00,2012-06-02 00:00,,,2012-06-03 08:00,2012-06-03 08:00,,,,,PT_Normal,,,,,P+0F7lAXGkWfU381F90Bxg,,,,N,0,0,,,2012-06-19 11:47,2012-06-20 10:09,admin,admin
750,144758,5115,22847,6085,1,0,N,N,N,CP_Drtn,TT_Task,DT_FixedDUR2,RV_OK,TK_NotStart,4229EPL480,MTO for risers / spools,,2632,1336,48,0,0,0,48,0,0,0,,,,2013-09-19 08:00,2013-09-26 16:00,,2012-06-03 08:00,2012-06-10 16:00,2012-06-03 08:00,2012-06-10 16:00,2012-06-03 08:00,2012-06-10 16:00,,2013-09-19 08:00,2013-09-26 16:00,,PT_Normal,,,,,z6wNKU8HzUmyRyKxqT2cjQ,,,,N,0,0,,,2012-06-19 11:47,2012-06-20 09:59,admin,admin
751,144759,5115,22847,6085,1,100,N,N,N,CP_Drtn,TT_Task,DT_FixedDUR2,RV_OK,TK_Complete,4229EPL320,"18""""Spool ISO-IFD",,,,0,0,0,0,120,0,0,0,,2012-02-01 00:00,2012-02-21 00:00,2013-09-26 16:00,2013-09-26 16:00,,2012-06-02 00:00,2012-06-02 00:00,,,2012-03-04 08:00,2012-03-22 16:00,,,,,PT_Normal,,,,,bA/J8FH2+U6okPM05OL76w,QWvo4lzWEkeSB/GI9TalYQ,,,N,0,0,,,2012-06-19 11:47,2012-06-20 10:09,admin,admin
752,144760,5115,22847,6085,1,100,N,N,N,CP_Drtn,TT_Task,DT_FixedDUR2,RV_OK,TK_Complete,4229EPL340,"8""""Spool ISO-IFD",,,,0,0,0,0,120,0,0,0,,2012-02-01 00:00,2012-02-21 00:00,2013-09-26 16:00,2013-09-26 16:00,,2012-06-02 00:00,2012-06-02 00:00,,,2012-03-04 08:00,2012-03-22 16:00,,,,,PT_Normal,,,,,jCDzL60XzUmQkTUMXOi3nQ,+FL8Jip98kWoIme5/i161w,,,N,0,0,,,2012-06-19 11:47,2012-06-20 10:09,admin,admin
753,144761,5115,22847,6085,1,100,N,N,N,CP_Drtn,TT_Task,DT_FixedDUR2,RV_OK,TK_Complete,4229EPL380,"8""""Riser ISO-IFD",,,,0,0,0,0,120,0,0,0,,2012-02-26 00:00,2012-03-15 00:00,2013-09-26 16:00,2013-09-26 16:00,,2012-06-02 00:00,2012-06-02 00:00,,,2012-03-05 08:00,2012-03-25 16:00,,,,,PT_Normal,,,,,iLmBBbCQSESP8Y/YUEmbkw,An0k6jaeek+tGUVppnFC2g,,,N,0,0,,,2012-06-19 11:47,2012-06-20 10:09,admin,admin
754,144762,5115,22847,6085,1,100,N,N,N,CP_Drtn,TT_Task,DT_FixedDUR2,RV_OK,TK_Complete,4229EPL400,"18""""Riser ISO-IFD",,,,0,0,0,0,120,0,0,0,,2012-02-26 08:00,2012-03-15 00:00,2013-09-26 16:00,2013-09-26 16:00,,2012-06-02 00:00,2012-06-02 00:00,,,2012-02-26 08:00,2012-03-15 16:00,,,,,PT_Normal,,,,,XMEKhwxIGEW7oqHrMiyhtQ,pGWAx7T7vESmiNqcx8nO8w,,,N,0,0,,,2012-06-19 11:47,2012-06-20 10:09,admin,admin
755,144763,5115,22847,6085,1,100,N,N,N,CP_Drtn,TT_Task,DT_FixedDUR2,RV_OK,TK_Complete,4229EPL160,"18"""" spool arrangement drawing -Approval",,,,0,0,0,0,120,0,0,0,,2011-11-15 00:00,2011-12-15 00:00,2013-09-15 08:00,2013-09-15 08:00,,2012-06-02 00:00,2012-06-02 00:00,,,2011-12-04 08:00,2011-12-22 16:00,,,,,PT_Normal,,,,,R0dBvAroc02+yXCznZeuMg,,,,N,0,0,,,2012-06-19 11:47,2012-06-20 10:09,admin,admin
756,144764,5115,22848,6085,1,100,N,N,N,CP_Drtn,TT_Task,DT_FixedDUR2,RV_OK,TK_Complete,4229EPL120,Wall thickness report for risers & spools-Approval,,,,0,0,0,0,40,0,0,0,,2011-11-30 00:00,2011-12-05 16:00,2013-09-26 16:00,2013-09-26 16:00,,2012-06-02 00:00,2012-06-02 00:00,,,2011-12-11 08:00,2011-12-15 16:00,,,,,PT_Normal,,,,,p+BAOMejQk2XWI1eoIZ3SQ,,,,N,0,0,,,2012-06-19 11:47,2012-06-20 10:09,admin,admin
757,144765,5115,22848,6085,1,100,N,N,N,CP_Drtn,TT_Task,DT_FixedDUR2,RV_OK,TK_Complete,4229EPL200,Wall thickness report for risers & spools-Final,,,,0,0,0,0,40,0,0,0,,2011-12-06 00:00,2011-12-19 16:00,2013-09-26 16:00,2013-09-26 16:00,,2012-06-02 00:00,2012-06-02 00:00,,,2011-12-13 08:00,2011-12-19 16:00,,,,,PT_Normal,,,,,lIrGZPXjE0OfcK8yNDInUw,,,,N,0,0,,,2012-06-19 11:47,2012-06-20 10:09,admin,admin
758,144766,5115,22848,6085,1,0,N,N,N,CP_Drtn,TT_Task,DT_FixedDUR2,RV_OK,TK_Active,4229EPL490,Risers / spoolpieces stress analysis report-Construction,,2640,1344,40,0,0,0,80,0,0,0,,2012-04-26 00:00,,2013-09-22 08:00,2013-09-26 16:00,,2012-06-03 08:00,2012-06-07 16:00,2012-06-03 08:00,2012-06-07 16:00,2012-05-24 08:00,2012-06-06 16:00,,2013-09-22 08:00,2013-09-26 16:00,,PT_Normal,,,,,gmITkL4ekkOTzO+LMeJ8Ig,,,,N,0,0,,,2012-06-19 11:47,2012-06-20 09:59,admin,admin
759,144767,5115,22849,6085,1,100,N,N,N,CP_Drtn,TT_Task,DT_FixedDUR2,RV_OK,TK_Complete,4229EPL550,VPR for isolating joints,,,,0,0,0,0,320,0,0,0,,2012-01-09 00:00,2012-04-16 00:00,2013-09-26 16:00,2013-09-26 16:00,,2012-06-08 08:00,2012-06-08 08:00,,,2012-03-11 08:00,2012-05-03 16:00,,,,,PT_Normal,,,,,vEf+KqpMyUio8a/CwTOWxw,,,,N,0,0,,,2012-06-19 11:47,2012-06-20 10:09,admin,admin
760,144768,5115,22849,6085,1,100,N,N,N,CP_Drtn,TT_Task,DT_FixedDUR2,RV_OK,TK_Complete,4229EPL520,VPR for  anchor flanges,,,,0,0,0,0,320,0,0,0,,2012-02-21 00:00,2012-03-20 00:00,2013-09-26 16:00,2013-09-26 16:00,,2012-06-07 16:00,2012-06-07 16:00,,,2012-04-22 08:00,2012-06-14 16:00,,,,,PT_Normal,,,,,rjsnraH6nUWQuAFSE7Xlmg,,,,N,0,0,,,2012-06-19 11:47,2012-06-20 10:09,admin,admin
761,144769,5115,22849,6085,1,0,N,N,N,CP_Drtn,TT_Task,DT_FixedDUR2,RV_OK,TK_Active,4229EPL510,VPR for flanges,,2320,1176,360,0,0,0,320,0,0,0,,2012-03-11 00:00,,2013-07-28 08:00,2013-09-26 16:00,,2012-06-03 08:00,2012-08-02 16:00,2012-06-03 08:00,2012-08-02 16:00,2012-03-29 08:00,2012-05-23 16:00,,2013-07-28 08:00,2013-09-26 16:00,,PT_Normal,,,,,9oi1JNW16EKHUwHI8YpUYg,,,,N,0,0,,,2012-06-19 11:47,2012-06-20 09:59,admin,admin
762,144770,5115,22849,6085,1,100,N,N,N,CP_Drtn,TT_Task,DT_FixedDUR2,RV_OK,TK_Complete,4229EPL530,VPR for heat shrink sleeves,,,,0,0,0,0,320,0,0,0,,2012-02-19 00:00,2012-02-29 00:00,2013-09-26 16:00,2013-09-26 16:00,,2012-06-02 00:00,2012-06-02 00:00,,,2012-03-04 08:00,2012-04-26 16:00,,,,,PT_Normal,,,,,1H5ByE3GaEOU07unn+8guA,,,,N,0,0,,,2012-06-19 11:47,2012-06-20 10:09,admin,admin
763,144771,5115,22849,6085,1,100,N,N,N,CP_Drtn,TT_Task,DT_FixedDUR2,RV_OK,TK_Complete,4229EPL540,VPR for  kamos ring,,,,0,0,0,0,320,0,0,0,,2012-02-01 00:00,2012-03-01 00:00,2013-09-26 16:00,2013-09-26 16:00,,2012-06-02 00:00,2012-06-02 00:00,,,2012-03-04 08:00,2012-04-26 16:00,,,,,PT_Normal,,,,,DUQOMcz0F0ybxMIe0FiRpQ,,,,N,0,0,,,2012-06-19 11:47,2012-06-20 10:09,admin,admin
764,144772,5115,22849,6085,1,100,N,N,N,CP_Drtn,TT_Task,DT_FixedDUR2,RV_OK,TK_Complete,4229EPL70,"T.E.R for 8""""line pipe",,,,0,0,0,0,160,0,0,0,,2011-11-22 00:00,2012-01-08 16:00,2013-07-22 08:00,2013-07-22 08:00,,2012-06-02 00:00,2012-06-02 00:00,,,2012-01-22 08:00,2012-02-19 16:00,,,,,PT_Normal,,,,,M15UJo//vkaqYkRblmVBWg,,,,N,0,0,,,2012-06-19 11:47,2012-06-20 10:09,admin,admin
765,144773,5115,22849,6085,1,100,N,N,N,CP_Drtn,TT_Task,DT_FixedDUR2,RV_OK,TK_Complete,4229EPL90,T.E.R for hot bends,,,,0,0,0,0,160,0,0,0,,2011-10-30 00:00,2011-12-08 00:00,2013-06-04 08:00,2013-06-04 08:00,,2012-06-02 00:00,2012-06-02 00:00,,,2011-12-04 08:00,2011-12-29 16:00,,,,,PT_Normal,,,,,NrF1PXvDDkmdWFjZztUKYQ,,,,N,0,0,,,2012-06-19 11:47,2012-06-20 10:09,admin,admin
766,144774,5115,22849,6085,1,100,N,N,N,CP_Drtn,TT_Task,DT_FixedDUR2,RV_OK,TK_Complete,4229EPL100,T.E.R for flanges,,,,0,0,0,0,160,0,0,0,,2011-12-01 00:00,2012-01-18 16:00,2013-07-28 08:00,2013-07-28 08:00,,2012-06-02 00:00,2012-06-02 00:00,,,2011-12-05 08:00,2012-01-01 16:00,,,,,PT_Normal,,,,,g7fbs/jLZEqDvt1QtT8Z2Q,,,,N,0,0,,,2012-06-19 11:47,2012-06-20 10:09,admin,admin
767,144775,5115,22849,6085,1,100,N,N,N,CP_Drtn,TT_Task,DT_FixedDUR2,RV_OK,TK_Complete,4229EPL130,T.E.R for heat shrink sleeves,,,,0,0,0,0,120,0,0,0,,2011-11-03 00:00,2011-12-05 00:00,2013-09-26 16:00,2013-09-26 16:00,,2012-06-02 00:00,2012-06-02 00:00,,,2011-12-04 08:00,2011-12-22 16:00,,,,,PT_Normal,,,,,8BQ8X38vSkSIcxJ5CaTgVw,,,,N,0,0,,,2012-06-19 11:47,2012-06-20 10:09,admin,admin
768,144776,5115,22849,6085,1,100,N,N,N,CP_Drtn,TT_Task,DT_FixedDUR2,RV_OK,TK_Complete,4229EPL140,T.E.R for kamos ring,,,,0,0,0,0,120,0,0,0,,2011-11-13 00:00,2011-11-20 00:00,2013-09-26 16:00,2013-09-26 16:00,,2012-06-02 00:00,2012-06-02 00:00,,,2011-12-04 08:00,2011-12-22 16:00,,,,,PT_Normal,,,,,fGYau55tL0KIF8jEo0Sqcg,,,,N,0,0,,,2012-06-19 11:47,2012-06-20 10:09,admin,admin
769,144777,5115,22849,6085,1,100,N,N,N,CP_Drtn,TT_Task,DT_FixedDUR2,RV_OK,TK_Complete,4229EPL210,T.E.R for isolating joints,,,,0,0,0,0,120,0,0,0,,2011-11-13 00:00,2011-12-08 00:00,2013-08-21 08:00,2013-08-21 08:00,,2012-06-02 00:00,2012-06-02 00:00,,,2011-12-04 08:00,2011-12-22 16:00,,,,,PT_Normal,,,,,7GCYMesGr0Slx0X7LI2KAw,,,,N,0,0,,,2012-06-19 11:47,2012-06-20 10:09,admin,admin
770,144778,5115,22849,6085,1,100,N,N,N,CP_Drtn,TT_Task,DT_FixedDUR2,RV_OK,TK_Complete,4229EPL150,T.E.R for anchor flanges,,,,0,0,0,0,120,0,0,0,,2011-12-06 08:00,2012-01-05 00:00,2013-08-21 08:00,2013-08-21 08:00,,2012-06-02 00:00,2012-06-02 00:00,,,2011-12-06 08:00,2011-12-26 16:00,,,,,PT_Normal,,,,,nhSKEATG90uUELiRwPhNag,,,,N,0,0,,,2012-06-19 11:47,2012-06-20 10:09,admin,admin
771,144779,5115,22849,6085,1,100,N,N,N,CP_Drtn,TT_Task,DT_FixedDUR2,RV_OK,TK_Complete,4229EPL10,Pipeline specifications & data sheets,,,,0,0,0,0,168,0,0,0,,2011-08-15 08:00,2011-09-14 16:00,2013-06-04 08:00,2013-06-04 08:00,,2012-06-02 00:00,2012-06-02 00:00,,,2011-08-15 08:00,2011-09-14 16:00,,,,,PT_Normal,,,,,WEV+0+G3GUic7CC5j6L2tw,vfWL9w00SHKHeaxQNrnnog,,,N,0,0,,,2012-06-19 11:47,2012-06-20 10:09,admin,admin
772,144780,5115,22849,6085,1,100,N,N,N,CP_Drtn,TT_Task,DT_FixedDUR2,RV_OK,TK_Complete,4229EPL40,MRQ for heat shrink sleeves,,,,0,0,0,0,80,0,0,0,,2011-09-27 08:00,2011-10-11 16:00,2013-08-21 08:00,2013-08-21 08:00,,2012-06-02 00:00,2012-06-02 00:00,,,2011-09-27 08:00,2011-10-11 16:00,,,,,PT_Normal,,,,,aIFnnImwOkWfaA+CfNFcqQ,,,,N,0,0,,,2012-06-19 11:47,2012-06-20 10:09,admin,admin
773,144781,5115,22849,6085,1,100,N,N,N,CP_Drtn,TT_Task,DT_FixedDUR2,RV_OK,TK_Complete,4229EPL560,"MRQ for 8"""" line pipe",,,,0,0,0,0,80,0,0,0,,2011-10-09 08:00,2011-10-23 00:00,2013-07-22 08:00,2013-07-22 08:00,,2012-06-02 00:00,2012-06-02 00:00,,,2011-10-09 08:00,2011-10-20 16:00,,,,,PT_Normal,,,,,ihAzxGL7Ekyks8ax/J8NYg,,,,N,0,0,,,2012-06-19 11:47,2012-06-20 10:09,admin,admin
774,144782,5115,22849,6085,1,0,N,N,N,CP_Drtn,TT_Task,DT_FixedDUR2,RV_OK,TK_Active,4229EPL570,"VPR for  8""""line pipe",,2560,2560,80,0,0,0,320,0,0,0,,2012-04-05 00:00,,2013-09-15 08:00,2013-09-26 16:00,,2012-06-10 08:00,2012-06-21 16:00,2012-06-10 08:00,2012-06-21 16:00,2012-05-06 08:00,2012-06-28 16:00,,2013-09-15 08:00,2013-09-26 16:00,,PT_Normal,,,,,iAwN7b81H0+9mM3vvF1QgQ,,,,N,0,0,,,2012-06-19 11:47,2012-06-20 09:59,admin,admin
775,144783,5115,22849,6085,1,100,N,N,N,CP_Drtn,TT_Task,DT_FixedDUR2,RV_OK,TK_Complete,4229EPL20,MRQ for hot bends,,,,0,0,0,0,120,0,0,0,,2011-09-15 08:00,2011-10-02 00:00,2013-06-04 08:00,2013-06-04 08:00,,2012-06-02 00:00,2012-06-02 00:00,,,2011-09-15 08:00,2011-10-05 16:00,,,,,PT_Normal,,,,,3gp6QYivP0SFS4ENIz/kAA,,,,N,0,0,,,2012-06-19 11:47,2012-06-20 10:09,admin,admin
776,144784,5115,22849,6085,1,100,N,N,N,CP_Drtn,TT_Task,DT_FixedDUR2,RV_OK,TK_Complete,4229EPL260,MRP for heat shrink sleeves,,,,0,0,0,0,40,0,0,0,,2012-01-24 08:00,2012-02-02 00:00,2013-09-26 16:00,2013-09-26 16:00,,2012-06-02 00:00,2012-06-02 00:00,,,2012-01-24 08:00,2012-01-31 16:00,,,,,PT_Normal,,,,,momb2wQMrU6QgnnYXVfAiQ,,,,N,0,0,,,2012-06-19 11:47,2012-06-20 10:09,admin,admin
777,144785,5115,22849,6085,1,100,N,N,N,CP_Drtn,TT_Task,DT_FixedDUR2,RV_OK,TK_Complete,4229EPL270,MRP for kamos ring,,,,0,0,0,0,40,0,0,0,,2011-12-21 00:00,2011-12-26 00:00,2013-09-26 16:00,2013-09-26 16:00,,2012-06-02 00:00,2012-06-02 00:00,,,2012-01-08 08:00,2012-01-12 16:00,,,,,PT_Normal,,,,,blF3LbJndEWvS+6VC/uq+w,,,,N,0,0,,,2012-06-19 11:47,2012-06-20 10:09,admin,admin
778,144786,5115,22849,6085,1,100,N,N,N,CP_Drtn,TT_Task,DT_FixedDUR2,RV_OK,TK_Complete,4229EPL300,MRP for isolating joints,,,,0,0,0,0,8,0,0,0,,2012-01-24 00:00,2012-01-31 00:00,2013-08-21 08:00,2013-08-21 08:00,,2012-06-02 00:00,2012-06-02 00:00,,,2012-01-29 08:00,2012-01-29 16:00,,,,,PT_Normal,,,,,2nBbbR1t60GBgg7FkdLijg,,,,N,0,0,,,2012-06-19 11:47,2012-06-20 10:09,admin,admin
779,144787,5115,22849,6085,1,100,N,N,N,CP_Drtn,TT_Task,DT_FixedDUR2,RV_OK,TK_Complete,4229EPL190,MRP for hot bends,,,,0,0,0,0,40,0,0,0,,2012-02-09 00:00,2012-02-19 00:00,2013-06-04 08:00,2013-06-04 08:00,,2012-06-02 00:00,2012-06-02 00:00,,,2012-01-29 08:00,2012-02-02 16:00,,,,,PT_Normal,,,,,KrvTwRF28UiwaP0oDfVhXQ,,,,N,0,0,,,2012-06-19 11:47,2012-06-20 10:09,admin,admin
780,144788,5115,22849,6085,1,100,N,N,N,CP_Drtn,TT_Task,DT_FixedDUR2,RV_OK,TK_Complete,4229EPL220,MRP for flanges,,,,0,0,0,0,40,0,0,0,,2012-02-26 00:00,2012-02-28 00:00,2013-07-28 08:00,2013-07-28 08:00,,2012-06-02 00:00,2012-06-02 00:00,,,2012-03-07 08:00,2012-03-13 16:00,,,,,PT_Normal,,,,,CwbmQAehzEGnAE40Qy8KiA,,,,N,0,0,,,2012-06-19 11:47,2012-06-20 10:09,admin,admin
781,144789,5115,22849,6085,1,100,N,N,N,CP_Drtn,TT_Task,DT_FixedDUR2,RV_OK,TK_Complete,4229EPL280,MRP for anchor flanges,,,,0,0,0,0,40,0,0,0,,2012-02-14 00:00,2012-02-28 00:00,2013-08-21 08:00,2013-08-21 08:00,,2012-06-02 00:00,2012-06-02 00:00,,,2012-03-04 08:00,2012-03-08 16:00,,,,,PT_Normal,,,,,tchPLsjPZEW5kNXrnhU1pQ,,,,N,0,0,,,2012-06-19 11:47,2012-06-20 10:09,admin,admin
782,144790,5115,22849,6085,1,100,N,N,N,CP_Drtn,TT_Task,DT_FixedDUR2,RV_OK,TK_Complete,4229EPL60,MRQ for Kamos ring,,,,0,0,0,0,80,0,0,0,,2011-09-22 08:00,2011-10-02 00:00,2013-08-21 08:00,2013-08-21 08:00,,2012-06-02 00:00,2012-06-02 00:00,,,2011-09-22 08:00,2011-10-05 16:00,,,,,PT_Normal,,,,,xNwNTICkN0qH+xbZZ9TooQ,,,,N,0,0,,,2012-06-19 11:47,2012-06-20 10:09,admin,admin
783,144791,5115,22849,6085,1,100,N,N,N,CP_Drtn,TT_Task,DT_FixedDUR2,RV_OK,TK_Complete,4229EPL80,MRQ for isolating joints,,,,0,0,0,0,80,0,0,0,,2011-10-04 08:00,2011-10-19 00:00,2013-08-21 08:00,2013-08-21 08:00,,2012-06-02 00:00,2012-06-02 00:00,,,2011-10-04 08:00,2011-10-18 16:00,,,,,PT_Normal,,,,,+bb2NpZaa0q7FNRstmzlQg,Iy03cOKrXESwGRujrHG5XQ,,,N,0,0,,,2012-06-19 11:47,2012-06-20 10:09,admin,admin
784,144792,5115,22849,6085,1,100,N,N,N,CP_Drtn,TT_Task,DT_FixedDUR2,RV_OK,TK_Complete,4229EPL50,MRQ for anchor flanges,,,,0,0,0,0,64,0,0,0,,2011-10-16 08:00,2011-10-25 16:00,2013-07-22 08:00,2013-07-22 08:00,,2012-06-02 00:00,2012-06-02 00:00,,,2011-10-16 08:00,2011-10-25 16:00,,,,,PT_Normal,,,,,XxsPfBQpJkimk08ay7GGfw,,,,N,0,0,,,2012-06-19 11:47,2012-06-20 10:09,admin,admin
785,144793,5115,22849,6085,1,100,N,N,N,CP_Drtn,TT_Task,DT_FixedDUR2,RV_OK,TK_Complete,4229EPL30,MRQ for flanges,,,,0,0,0,0,40,0,0,0,,2011-10-09 08:00,2011-10-13 16:00,2013-07-22 08:00,2013-07-22 08:00,,2012-06-02 00:00,2012-06-02 00:00,,,2011-10-09 08:00,2011-10-13 16:00,,,,,PT_Normal,,,,,nZmqdulwHUKN6XILIRjwTA,,,,N,0,0,,,2012-06-19 11:47,2012-06-20 10:09,admin,admin
786,144794,5115,22849,6085,1,100,N,N,N,CP_Drtn,TT_Task,DT_FixedDUR2,RV_OK,TK_Complete,4229EPL110,"MRP for 8"""" pipeline",,,,0,0,0,0,40,0,0,0,,2012-02-21 00:00,2012-02-26 00:00,2013-07-22 08:00,2013-07-22 08:00,,2012-06-02 00:00,2012-06-02 00:00,,,2012-03-04 08:00,2012-03-08 16:00,,,,,PT_Normal,,,,,oOsFLJR/5kqVtfZRZgbhKA,,,,N,0,0,,,2012-06-19 11:47,2012-06-20 10:09,admin,admin
787,144795,5115,22849,6085,1,100,N,N,N,CP_Drtn,TT_Task,DT_FixedDUR2,RV_OK,TK_Complete,4229EPL250,Testing & pre-commissioning specification-Approval,,,,0,0,0,0,80,0,0,0,,2011-12-14 08:00,2012-01-02 16:00,2013-09-22 08:00,2013-09-22 08:00,,2012-06-02 00:00,2012-06-02 00:00,,,2011-12-14 08:00,2011-12-27 16:00,,,,,PT_Normal,,,,,QW0WIjiK80yIAARUYPigxA,,,,N,0,0,,,2012-06-19 11:47,2012-06-20 10:09,admin,admin
788,144796,5115,22849,6085,1,0,N,N,N,CP_Drtn,TT_Task,DT_FixedDUR2,RV_OK,TK_NotStart,4229EPL360,Testing & pre-commissioning specification-Final,,2120,824,40,0,0,0,40,0,0,0,,,,2013-09-22 08:00,2013-09-26 16:00,,2012-09-09 08:00,2012-09-13 16:00,2012-09-09 08:00,2012-09-13 16:00,2012-09-09 08:00,2012-09-13 16:00,,2013-09-22 08:00,2013-09-26 16:00,,PT_Normal,,,,,pKbAh1Iyj0G+4O33dnEQiw,,,,N,0,0,,,2012-06-19 11:47,2012-06-20 09:59,admin,admin
789,144797,5115,22849,6085,1,100,N,N,N,CP_Drtn,TT_Task,DT_FixedDUR2,RV_OK,TK_Complete,4229EPL180,Welding  & NDT specification-Design,,,,0,0,0,0,80,0,0,0,,2011-12-01 00:00,2011-12-21 00:00,2013-09-26 16:00,2013-09-26 16:00,,2012-06-02 00:00,2012-06-02 00:00,,,2011-12-04 08:00,2011-12-15 16:00,,,,,PT_Normal,,,,,Y4ZL3Q1ydkGuCcH2FYKX6Q,SduIFwWkCkaQdv/5HupADw,,,N,0,0,,,2012-06-19 11:47,2012-06-20 10:09,admin,admin
790,144798,5115,22849,6085,1,100,N,N,N,CP_Drtn,TT_Task,DT_FixedDUR2,RV_OK,TK_Complete,4229EPL370,Welding  & NDT specification-Final,,,,0,0,0,0,40,0,0,0,,2012-01-01 00:00,2012-03-08 00:00,2013-09-26 16:00,2013-09-26 16:00,,2012-06-02 00:00,2012-06-02 00:00,,,2012-07-19 08:00,2012-07-25 16:00,,,,,PT_Normal,,,,,6v18gLBKQUer38QosM0mMA,FggATIGo6UWUldhCHJdfyQ,,,N,0,0,,,2012-06-19 11:47,2012-06-20 10:09,admin,admin
791,144799,5115,22849,6085,1,0,N,N,N,CP_Drtn,TT_Task,DT_FixedDUR2,RV_OK,TK_Active,4229EPL500,VPR for hot bends,,2320,1176,320,0,0,0,320,0,0,0,,2012-04-18 00:00,,2013-08-04 08:00,2013-09-26 16:00,,2012-06-10 08:00,2012-08-02 16:00,2012-06-10 08:00,2012-08-02 16:00,2012-04-08 08:00,2012-05-31 16:00,,2013-08-04 08:00,2013-09-26 16:00,,PT_Normal,,,,,q98exwARJUu3mQXkk0xAyQ,,,,N,0,0,,,2012-06-19 11:47,2012-06-20 09:59,admin,admin
792,144800,5115,22853,6085,1,100,N,N,N,CP_Drtn,TT_Task,DT_FixedDUR2,RV_OK,TK_Complete,4229EPV70,V.P.R for Small Tanks (cancelled),,,,0,0,0,0,400,0,0,0,,2012-03-03 00:00,2012-03-03 00:00,2013-09-26 16:00,2013-09-26 16:00,,2012-06-02 00:00,2012-06-02 00:00,,,2012-04-29 08:00,2012-07-05 16:00,,,,,PT_Normal,,,,,FnAZVBtbn0a9KZloG+8sVQ,,,,N,0,0,,,2012-06-19 11:47,2012-06-20 10:09,admin,admin
793,144801,5115,22853,6085,1,0,N,N,N,CP_Drtn,TT_Task,DT_FixedDUR2,RV_OK,TK_Active,4229EPV80,V.P.R for Pressure Vesseles,,2320,1176,320,0,0,0,320,0,0,0,,2012-04-09 00:00,,2013-08-04 08:00,2013-09-26 16:00,,2012-06-10 08:00,2012-08-02 16:00,2012-06-10 08:00,2012-08-02 16:00,2012-05-06 08:00,2012-06-28 16:00,,2013-08-04 08:00,2013-09-26 16:00,,PT_Normal,,,,,3Lzro1dy0UqDevFcfTMTxA,,,,N,0,0,,,2012-06-19 11:47,2012-06-20 09:59,admin,admin
794,144802,5115,22853,6085,1,100,N,N,N,CP_Drtn,TT_Task,DT_FixedDUR2,RV_OK,TK_Complete,4229EPV30,T.E.R for  Small Tanks,,,,0,0,0,0,160,0,0,0,,2011-11-24 00:00,2011-12-29 00:00,2012-12-31 08:00,2012-12-31 08:00,,2012-06-02 00:00,2012-06-02 00:00,,,2011-12-04 08:00,2011-12-29 16:00,,,,,PT_Normal,,,,,gIItl34n/kacdHSvWekFsw,+adQvSlUzkOZha6HG7fiRA,,,N,0,0,,,2012-06-19 11:47,2012-06-20 10:09,admin,admin
795,144803,5115,22853,6085,1,100,N,N,N,CP_Drtn,TT_Task,DT_FixedDUR2,RV_OK,TK_Complete,4229EPV50,MRP for Small Tanks (cancelled),,,,0,0,0,0,40,0,0,0,,2012-03-03 00:00,2012-03-03 00:00,2012-12-31 08:00,2012-12-31 08:00,,2012-06-02 00:00,2012-06-02 00:00,,,2012-03-18 08:00,2012-03-22 16:00,,,,,PT_Normal,,,,,L36uJUdBmkCIXqcAH/xn0A,uCQ7t7XtkE2pu5tmschigw,,,N,0,0,,,2012-06-19 11:47,2012-06-20 10:09,admin,admin
796,144804,5115,22853,6085,1,100,N,N,N,CP_Drtn,TT_Task,DT_FixedDUR2,RV_OK,TK_Complete,4229EPV10,Issue MRQ for Small Tanks,,,,0,0,0,0,40,0,0,0,,2011-09-25 00:00,2011-10-24 00:00,2013-09-26 16:00,2013-09-26 16:00,,2012-06-02 00:00,2012-06-02 00:00,,,2011-10-27 08:00,2011-11-02 16:00,,,,,PT_Normal,,,,,aLTpLcA3I0u1XTTp1mN9MA,fa+QQs2lrkWif6ZY5ZmI+Q,,,N,0,0,,,2012-06-19 11:47,2012-06-20 10:09,admin,admin
797,144805,5115,22853,6085,1,100,N,N,N,CP_Drtn,TT_Task,DT_FixedDUR2,RV_OK,TK_Complete,4229EPV40,T.E.R for Pressure Vessels,,,,0,0,0,0,160,0,0,0,,2011-12-15 00:00,2012-02-20 00:00,2013-01-14 08:00,2013-01-14 08:00,,2012-06-02 00:00,2012-06-02 00:00,,,2011-12-11 08:00,2012-01-05 16:00,,,,,PT_Normal,,,,,JcwhHR9YE0OWGU23AO9hww,+adQvSlUzkOZha6HG7fiRA,,,N,0,0,,,2012-06-19 11:47,2012-06-20 10:09,admin,admin
798,144806,5115,22853,6085,1,100,N,N,N,CP_Drtn,TT_Task,DT_FixedDUR2,RV_OK,TK_Complete,4229EPV60,MRP for  Pressure Vessels,,,,0,0,0,0,40,0,0,0,,2012-03-25 08:00,2012-03-25 16:00,2013-01-14 08:00,2013-01-14 08:00,,2012-06-02 00:00,2012-06-02 00:00,,,2012-03-25 08:00,2012-03-29 16:00,,,,,PT_Normal,,,,,cA5spJ1nBEa07hAWlNDpmw,uCQ7t7XtkE2pu5tmschigw,,,N,0,0,,,2012-06-19 11:47,2012-06-20 10:09,admin,admin
799,144807,5115,22853,6085,1,100,N,N,N,CP_Drtn,TT_Task,DT_FixedDUR2,RV_OK,TK_Complete,4229EPV20,Issue MRQ for Pressure vesseles,,,,0,0,0,0,40,0,0,0,,2011-09-25 00:00,2011-11-17 00:00,2013-01-14 08:00,2013-01-14 08:00,,2012-06-02 00:00,2012-06-02 00:00,,,2011-11-01 08:00,2011-11-14 16:00,,,,,PT_Normal,,,,,mS+GFw17K0OC89rbXMPtlg,fa+QQs2lrkWif6ZY5ZmI+Q,,,N,0,0,,,2012-06-19 11:47,2012-06-20 10:09,admin,admin
800,144808,5115,22855,6085,1,100,N,N,N,CP_Drtn,TT_Task,DT_FixedDUR2,RV_OK,TK_Complete,4229ETE20,Final Telecommunication Philosophy,,,,0,0,0,0,64,0,0,0,,2011-11-28 00:00,2011-12-04 00:00,2013-09-26 16:00,2013-09-26 16:00,,2012-06-02 00:00,2012-06-02 00:00,,,2011-12-04 08:00,2011-12-13 16:00,,,,,PT_Normal,,,,,yKGnty+LYEO/QWElZ9kLkw,,,,N,0,0,,,2012-06-19 11:47,2012-06-20 10:09,admin,admin
801,144809,5115,22855,6085,1,100,N,N,N,CP_Drtn,TT_Task,DT_FixedDUR2,RV_OK,TK_Complete,4229ETE10,Telecommunication Philosophy IFA,,,,0,0,0,0,80,0,0,0,,2011-10-13 08:00,2011-10-26 16:00,2013-09-26 16:00,2013-09-26 16:00,,2012-06-02 00:00,2012-06-02 00:00,,,2011-10-13 08:00,2011-10-26 16:00,,,,,PT_Normal,,,,,KrhMBMqJiU6z13Finm+sDA,,,,N,0,0,,,2012-06-19 11:47,2012-06-20 10:09,admin,admin
802,144810,5115,22856,6085,1,100,N,N,N,CP_Drtn,TT_Task,DT_FixedDUR2,RV_OK,TK_Complete,4229ETE30,Point To Point VHF Radio System specification,,,,0,0,0,0,72,0,0,0,,2011-10-17 00:00,2011-11-17 00:00,2013-09-26 16:00,2013-09-26 16:00,,2012-06-02 00:00,2012-06-02 00:00,,,2011-12-21 08:00,2012-01-02 16:00,,,,,PT_Normal,,,,,rriDpE29lkWsJQDiZy8BTg,,,,N,0,0,,,2012-06-19 11:47,2012-06-20 10:09,admin,admin
803,144811,5115,22856,6085,1,100,N,N,N,CP_Drtn,TT_Task,DT_FixedDUR2,RV_OK,TK_Complete,4229ETE40,Radar system specification IFA,,,,0,0,0,0,160,0,0,0,,2011-10-17 08:00,2011-11-17 00:00,2012-06-04 08:00,2012-06-04 08:00,,2012-06-02 00:00,2012-06-02 00:00,,,2011-10-17 08:00,2011-11-20 16:00,,,,,PT_Normal,,,,,+JEbTKGA10ulDKbaQxRhWA,,,,N,0,0,,,2012-06-19 11:47,2012-06-20 10:09,admin,admin
804,144812,5115,22856,6085,1,100,N,N,N,CP_Drtn,TT_Task,DT_FixedDUR2,RV_OK,TK_Complete,4229ETE50,Radar system specification IFD,,,,0,0,0,0,80,0,0,0,,2011-11-21 00:00,2011-11-30 00:00,2013-09-26 16:00,2013-09-26 16:00,,2012-06-02 00:00,2012-06-02 00:00,,,2011-12-04 08:00,2011-12-15 16:00,,,,,PT_Normal,,,,,5NYwc4b+j06QJpz4lNgDCQ,,,,N,0,0,,,2012-06-19 11:47,2012-06-20 10:09,admin,admin
805,144813,5115,22856,6085,1,0,N,N,N,CP_Drtn,TT_Task,DT_FixedDUR2,RV_OK,TK_NotStart,4229ETE60,Radar system specification IFP,,2136,2136,40,0,0,0,40,0,0,0,,,,2013-09-22 08:00,2013-09-26 16:00,,2012-09-05 08:00,2012-09-11 16:00,2012-09-05 08:00,2012-09-11 16:00,2012-09-05 08:00,2012-09-11 16:00,,2013-09-22 08:00,2013-09-26 16:00,,PT_Normal,,,,,vaI6a5/qlUybQY4ba80X6w,,,,N,0,0,,,2012-06-19 11:47,2012-06-20 09:59,admin,admin
806,144814,5115,22856,6085,1,100,N,N,N,CP_Drtn,TT_Task,DT_FixedDUR2,RV_OK,TK_Complete,4229ETE70,MRQ for Radar System IFA,,,,0,0,0,0,64,0,0,0,,2011-11-21 00:00,2011-11-30 00:00,2012-06-04 08:00,2012-06-04 08:00,,2012-06-02 00:00,2012-06-02 00:00,,,2011-12-11 08:00,2011-12-20 16:00,,,,,PT_Normal,,,,,VqH++sgKbUGYQVPVMsCqjA,,,,N,0,0,,,2012-06-19 11:47,2012-06-20 10:09,admin,admin
807,144815,5115,22856,6085,1,100,N,N,N,CP_Drtn,TT_Task,DT_FixedDUR2,RV_OK,TK_Complete,4229ETE80,MRQ for Radar System IFI,,,,0,0,0,0,32,0,0,0,,2011-11-21 00:00,2011-11-30 00:00,2012-06-04 08:00,2012-06-04 08:00,,2012-06-02 00:00,2012-06-02 00:00,,,2011-12-27 08:00,2012-01-01 16:00,,,,,PT_Normal,,,,,9jzKo2/DxUmP+koOSbf4Tg,,,,N,0,0,,,2012-06-19 11:47,2012-06-20 10:09,admin,admin
808,144816,5115,22856,6085,1,0,N,N,N,CP_Drtn,TT_Task,DT_FixedDUR2,RV_OK,TK_NotStart,4229ETE90,MRP for Radar System,,1392,0,40,0,0,0,40,0,0,0,,,,2013-05-14 08:00,2013-05-20 16:00,,2012-09-05 08:00,2012-09-11 16:00,2012-09-05 08:00,2012-09-11 16:00,2012-09-05 08:00,2012-09-11 16:00,,2013-05-14 08:00,2013-05-20 16:00,,PT_Normal,,,,,i1j416yGtk+5Wx88W4sEcA,,,,N,0,0,,,2012-06-19 11:47,2012-06-20 09:59,admin,admin
809,144817,5115,22856,6085,1,0,N,N,N,CP_Drtn,TT_Task,DT_FixedDUR2,RV_OK,TK_NotStart,4229ETE160,V.P.R  for Radar System,,1520,224,400,0,0,0,400,0,0,0,,,,2013-07-21 08:00,2013-09-26 16:00,,2012-10-28 08:00,2013-01-03 16:00,2012-10-28 08:00,2013-01-03 16:00,2012-10-28 08:00,2013-01-03 16:00,,2013-07-21 08:00,2013-09-26 16:00,,PT_Normal,,,,,YoHtZOWzDUaFKPVCRySIWg,,,,N,0,0,,,2012-06-19 11:47,2012-06-20 09:59,admin,admin
810,144818,5115,22856,6085,1,0,N,N,N,CP_Drtn,TT_Task,DT_FixedDUR2,RV_OK,TK_NotStart,4229ETE170,T.E.R for Radar System,,0,0,184,0,0,0,184,0,0,0,2012-07-03 08:00,,,2012-07-03 08:00,2012-08-02 16:00,,2012-07-03 08:00,2012-08-02 16:00,2012-07-03 08:00,2012-08-02 16:00,2012-07-03 08:00,2012-08-02 16:00,,2012-07-03 08:00,2012-08-02 16:00,CS_MSO,PT_Normal,,,,,heJvFGg7Sk+5Dtci/trGoA,,,,N,0,0,,,2012-06-19 11:47,2012-06-19 11:47,admin,admin
811,144819,5115,22857,6085,1,100,N,N,N,CP_Drtn,TT_Task,DT_FixedDUR2,RV_OK,TK_Complete,4229ETE100,Telecommunication equipment layout IFA,,,,0,0,0,0,96,0,0,0,,2011-12-05 00:00,2011-12-08 00:00,2013-09-26 16:00,2013-09-26 16:00,,2012-06-02 00:00,2012-06-02 00:00,,,2011-12-04 08:00,2011-12-19 16:00,,,,,PT_Normal,,,,,J31S8P4B/0O/JH6MdO+JMw,,,,N,0,0,,,2012-06-19 11:47,2012-06-20 10:09,admin,admin
812,144820,5115,22857,6085,1,0,N,N,N,CP_Drtn,TT_Task,DT_FixedDUR2,RV_OK,TK_NotStart,4229ETE110,Telecommunication equipment layout IFD (Expected to be cancelled),,2536,216,24,0,0,0,24,0,0,0,,,,2013-09-03 08:00,2013-09-05 16:00,,2012-06-03 08:00,2012-06-05 16:00,2012-06-03 08:00,2012-06-05 16:00,2012-06-03 08:00,2012-06-05 16:00,,2013-09-03 08:00,2013-09-05 16:00,,PT_Normal,,,,,GubOxIUNhUSRQLuqKIFEFw,,,,N,0,0,,,2012-06-19 11:47,2012-06-20 09:59,admin,admin
813,144821,5115,22857,6085,1,0,N,N,N,CP_Drtn,TT_Task,DT_FixedDUR2,RV_OK,TK_NotStart,4229ETE120,Telecommunication equipment layout IFC (Expected to be cancelled),,2320,2320,80,0,0,0,80,0,0,0,,,,2013-09-15 08:00,2013-09-26 16:00,,2012-07-22 08:00,2012-08-02 16:00,2012-07-22 08:00,2012-08-02 16:00,2012-07-22 08:00,2012-08-02 16:00,,2013-09-15 08:00,2013-09-26 16:00,,PT_Normal,,,,,mgZcVMY2fECqN5auLrtkYQ,,,,N,0,0,,,2012-06-19 11:47,2012-06-20 09:59,admin,admin
814,144822,5115,22857,6085,1,100,N,N,N,CP_Drtn,TT_Task,DT_FixedDUR2,RV_OK,TK_Complete,4229ETE130,Telecommunication cable routing IFA,,,,0,0,0,0,80,0,0,0,,2011-12-05 00:00,2012-01-19 16:00,2013-09-26 16:00,2013-09-26 16:00,,2012-06-02 00:00,2012-06-02 00:00,,,2012-01-01 08:00,2012-01-12 16:00,,,,,PT_Normal,,,,,7naGBVxQhEKYgCHic/nQlA,,,,N,0,0,,,2012-06-19 11:47,2012-06-20 10:09,admin,admin
815,144823,5115,22857,6085,1,100,N,N,N,CP_Drtn,TT_Task,DT_FixedDUR2,RV_OK,TK_Complete,4229ETE140,Telecommunication cable routing IFD,,,,0,0,0,0,80,0,0,0,,2012-02-01 00:00,2012-02-19 00:00,2013-09-26 16:00,2013-09-26 16:00,,2012-06-02 00:00,2012-06-02 00:00,,,2012-03-04 08:00,2012-03-15 16:00,,,,,PT_Normal,,,,,PycZdL+IlUyUxyXeeqZ6lQ,,,,N,0,0,,,2012-06-19 11:47,2012-06-20 10:09,admin,admin
816,144824,5115,22857,6085,1,0,N,N,N,CP_Drtn,TT_Task,DT_FixedDUR2,RV_OK,TK_NotStart,4229ETE150,Telecommunication cable routing IFC,,2280,984,80,0,0,0,80,0,0,0,,,,2013-09-15 08:00,2013-09-26 16:00,,2012-07-29 08:00,2012-08-09 16:00,2012-07-29 08:00,2012-08-09 16:00,2012-07-29 08:00,2012-08-09 16:00,,2013-09-15 08:00,2013-09-26 16:00,,PT_Normal,,,,,MBDlM5DiUU24xMa2AmD1zg,,,,N,0,0,,,2012-06-19 11:47,2012-06-20 09:59,admin,admin
817,144825,5115,22835,6085,1,0,N,N,N,CP_Drtn,TT_Task,DT_FixedDUR2,RV_OK,TK_NotStart,4229EME210,Material Selection Guide IFF,,2440,1144,40,0,0,0,40,0,0,0,,,,2013-09-22 08:00,2013-09-26 16:00,,2012-07-08 08:00,2012-07-12 16:00,2012-07-08 08:00,2012-07-12 16:00,2012-07-08 08:00,2012-07-12 16:00,,2013-09-22 08:00,2013-09-26 16:00,,PT_Normal,,,,,mH2/IrFN9EeT92ml0Y6nwQ,,,,N,0,0,,,2012-06-19 11:47,2012-06-20 09:59,admin,admin
818,144826,5115,22773,6085,1,0,N,N,N,CP_Drtn,TT_Task,DT_FixedDUR2,RV_OK,TK_NotStart,PMS01,Transport deck/topsides to site,,456,456,112,0,0,0,112,0,0,0,,,,2013-02-26 08:00,2013-03-17 16:00,,2012-12-09 08:00,2012-12-26 16:00,2012-12-09 08:00,2012-12-26 16:00,2012-12-09 08:00,2012-12-26 16:00,,2013-02-26 08:00,2013-03-17 16:00,,PT_Normal,,,,,AHXSiUf/hE+jRxdV8wWfSQ,,,,N,0,0,,,2012-06-20 08:06,2012-06-20 10:08,admin,admin
819,144827,5115,22773,6085,1,0,N,N,N,CP_Drtn,TT_Task,DT_FixedDUR2,RV_OK,TK_NotStart,PMS04,Install jacket,,0,0,16,0,0,0,16,0,0,0,,,,2013-03-04 08:00,2013-03-05 16:00,,2013-03-04 08:00,2013-03-05 16:00,2013-03-04 08:00,2013-03-05 16:00,2013-03-04 08:00,2013-03-05 16:00,,2013-03-04 08:00,2013-03-05 16:00,,PT_Normal,,,,,qKmMHF0EIUmbCTIsQvlpUA,,,,Y,0,0,,,2012-06-20 08:07,2012-06-20 10:09,admin,admin
820,144828,5115,22773,6085,1,0,N,N,N,CP_Drtn,TT_Task,DT_FixedDUR2,RV_OK,TK_NotStart,PMS06,Install deck/topside module,,0,0,16,0,0,0,16,0,0,0,,,,2013-03-18 08:00,2013-03-19 16:00,,2013-03-18 08:00,2013-03-19 16:00,2013-03-18 08:00,2013-03-19 16:00,2013-03-18 08:00,2013-03-19 16:00,,2013-03-18 08:00,2013-03-19 16:00,,PT_Normal,,,,,Bn6WNDAjVkeOlGvHQGwLTg,,,,Y,0,0,,,2012-06-20 08:08,2012-06-20 10:09,admin,admin
821,144829,5115,22773,6085,1,0,N,N,N,CP_Drtn,TT_Task,DT_FixedDUR2,RV_OK,TK_NotStart,PMS02,Transport Jacket and piles,,440,440,112,0,0,0,112,0,0,0,,,,2013-02-12 08:00,2013-03-03 16:00,,2012-11-27 08:00,2012-12-16 16:00,2012-11-27 08:00,2012-12-16 16:00,2012-11-27 08:00,2012-12-16 16:00,,2013-02-12 08:00,2013-03-03 16:00,,PT_Normal,,,,,8GuRs95eSUOAFPQ3BX+AfQ,,,,N,0,0,,,2012-06-20 08:09,2012-06-20 10:08,admin,admin
822,144830,5115,22773,6085,1,0,N,N,N,CP_Drtn,TT_Task,DT_FixedDUR2,RV_OK,TK_NotStart,PMS10,Tie-in risers and sealines,,0,0,32,0,0,0,32,0,0,0,,,,2013-03-20 08:00,2013-03-25 16:00,,2013-03-20 08:00,2013-03-25 16:00,2013-03-20 08:00,2013-03-25 16:00,2013-03-20 08:00,2013-03-25 16:00,,2013-03-20 08:00,2013-03-25 16:00,,PT_Normal,,,,,IsPkRPPEaUSM3algdSd91A,,,,Y,0,0,,,2012-06-20 08:10,2012-06-20 10:09,admin,admin
823,144831,5115,22773,6085,1,0,N,N,N,CP_Drtn,TT_Task,DT_FixedDUR2,RV_OK,TK_NotStart,PMS03,Transport sealine spools to site,,456,440,112,0,0,0,112,0,0,0,,,,2013-02-14 08:00,2013-03-05 16:00,,2012-11-27 08:00,2012-12-16 16:00,2012-11-27 08:00,2012-12-16 16:00,2012-11-27 08:00,2012-12-16 16:00,,2013-02-14 08:00,2013-03-05 16:00,,PT_Normal,,,,,IoVFRO9ZgUOeCWwr1L0zhw,,,,N,0,0,,,2012-06-20 08:12,2012-06-20 09:51,admin,admin
824,144832,5115,22773,6085,1,0,N,N,N,CP_Drtn,TT_Task,DT_FixedDUR2,RV_OK,TK_NotStart,PMS09,Install sealines,,16,16,80,0,0,0,80,0,0,0,,,,2013-03-06 08:00,2013-03-19 16:00,,2013-03-04 08:00,2013-03-17 16:00,2013-03-04 08:00,2013-03-17 16:00,2013-03-04 08:00,2013-03-17 16:00,,2013-03-06 08:00,2013-03-19 16:00,,PT_Normal,,,,,JkOt8KKPckqXnbEC6K8Byg,,,,N,0,0,,,2012-06-20 08:13,2012-06-20 09:46,admin,admin
825,144833,5115,22773,6085,1,0,N,N,N,CP_Drtn,TT_Task,DT_FixedDUR2,RV_OK,TK_NotStart,PMS20,Post-installation survey,,0,0,56,0,0,0,56,0,0,0,,,,2013-03-26 08:00,2013-04-03 16:00,,2013-03-26 08:00,2013-04-03 16:00,2013-03-26 08:00,2013-04-03 16:00,2013-03-26 08:00,2013-04-03 16:00,,2013-03-26 08:00,2013-04-03 16:00,,PT_Normal,,,,,UEtz1eNpiEe0pzIR/MireA,,,,Y,0,0,,,2012-06-20 08:14,2012-06-20 10:09,admin,admin
826,144834,5115,22773,6085,1,0,N,N,N,CP_Drtn,TT_Task,DT_FixedDUR2,RV_OK,TK_NotStart,PMS90,Release platform and transfer custody to Drilling,,0,0,8,0,0,0,8,0,0,0,,,,2013-04-04 08:00,2013-04-04 16:00,,2013-04-04 08:00,2013-04-04 16:00,2013-04-04 08:00,2013-04-04 16:00,2013-04-04 08:00,2013-04-04 16:00,,2013-04-04 08:00,2013-04-04 16:00,,PT_Normal,,,,,HF0owgI+W0ygjN/fYND3Og,,,,Y,0,0,,,2012-06-20 08:15,2012-06-20 10:09,admin,admin
827,144835,5115,22773,6085,1,0,N,N,N,CP_Drtn,TT_Task,DT_FixedDUR2,RV_OK,TK_NotStart,DRIL01,Drill well no. 1,,0,0,440,0,0,0,440,0,0,0,,,,2013-04-14 08:00,2013-06-27 16:00,,2013-04-14 08:00,2013-06-27 16:00,2013-04-14 08:00,2013-06-27 16:00,2013-04-14 08:00,2013-06-27 16:00,,2013-04-14 08:00,2013-06-27 16:00,,PT_Normal,,,,,sVRISsUKpEuTtgmSYSOEZg,,,,Y,0,0,,,2012-06-20 08:16,2012-06-20 10:09,admin,admin
828,144836,5115,22773,6085,1,0,N,N,N,CP_Drtn,TT_Task,DT_FixedDUR2,RV_OK,TK_NotStart,DRIL10,Complete Well no. 1,,0,0,360,0,0,0,360,0,0,0,,,,2013-06-30 08:00,2013-08-29 16:00,,2013-06-30 08:00,2013-08-29 16:00,2013-06-30 08:00,2013-08-29 16:00,2013-06-30 08:00,2013-08-29 16:00,,2013-06-30 08:00,2013-08-29 16:00,,PT_Normal,,,,,vyycXaioAk+AZJebLqEqmg,,,,Y,0,0,,,2012-06-20 08:17,2012-06-20 10:09,admin,admin
829,144837,5115,22773,6085,1,0,N,N,N,CP_Drtn,TT_Task,DT_FixedDUR2,RV_OK,TK_NotStart,PMS91,Mechanical complete and hookup well no. 1,,0,0,80,0,0,0,80,0,0,0,,,,2013-09-01 08:00,2013-09-12 16:00,,2013-09-01 08:00,2013-09-12 16:00,2013-09-01 08:00,2013-09-12 16:00,2013-09-01 08:00,2013-09-12 16:00,,2013-09-01 08:00,2013-09-12 16:00,,PT_Normal,,,,,j6BPwByz80Oy6XWixAM07w,,,,Y,0,0,,,2012-06-20 08:18,2012-06-20 10:09,admin,admin
830,144838,5115,22773,6085,1,0,N,N,N,CP_Drtn,TT_Task,DT_FixedDUR2,RV_OK,TK_NotStart,PMS96,Final precommissioning and commissioning,,0,0,80,0,0,0,80,0,0,0,,,,2013-09-15 08:00,2013-09-26 16:00,,2013-09-15 08:00,2013-09-26 16:00,2013-09-15 08:00,2013-09-26 16:00,2013-09-15 08:00,2013-09-26 16:00,,2013-09-15 08:00,2013-09-26 16:00,,PT_Normal,,,,,IQ9qhpkGuEO7a1aO+PJCdA,,,,Y,0,0,,,2012-06-20 08:19,2012-06-20 10:09,admin,admin
831,144839,5115,22773,6085,0,0,N,N,N,CP_Drtn,TT_FinMile,DT_FixedDrtn,RV_OK,TK_NotStart,GUP01,Startup and first oil,,0,0,0,0,0,0,0,0,0,0,,,,2013-09-26 16:00,2013-09-26 16:00,,2013-09-26 16:00,2013-09-26 16:00,2013-09-26 16:00,2013-09-26 16:00,2013-09-26 16:00,2013-09-26 16:00,,2013-09-26 16:00,2013-09-26 16:00,,PT_Normal,,,,,qKTPk8PJFEGcL9BT9Cn4hg,,,,Y,0,0,,,2012-06-20 08:20,2012-06-20 10:09,admin,admin
832,144840,5115,22773,6085,1,0,N,N,N,CP_Drtn,TT_Task,DT_FixedDUR2,RV_OK,TK_NotStart,PMS05,Drive piles,,0,0,64,0,0,0,64,0,0,0,,,,2013-03-06 08:00,2013-03-17 16:00,,2013-03-06 08:00,2013-03-17 16:00,2013-03-06 08:00,2013-03-17 16:00,2013-03-06 08:00,2013-03-17 16:00,,2013-03-06 08:00,2013-03-17 16:00,,PT_Normal,,,,,Xd86MYceJ0aPRQXkSk4w6A,,,,Y,0,0,,,2012-06-20 08:24,2012-06-20 10:09,admin,admin
833,144841,5115,22773,6085,1,0,N,N,N,CP_Drtn,TT_Task,DT_FixedDUR2,RV_OK,TK_NotStart,PMS00,Preinstallation survey,,0,0,40,0,0,0,40,0,0,0,,,,2013-02-25 08:00,2013-03-03 16:00,,2013-02-25 08:00,2013-03-03 16:00,2013-02-25 08:00,2013-03-03 16:00,2013-02-25 08:00,2013-03-03 16:00,,2013-02-25 08:00,2013-03-03 16:00,,PT_Normal,,,,,riMPtV9XB0+NPngMEY6QOQ,,,,Y,0,0,2013-01-23 08:00,,2012-06-20 08:25,2012-06-20 10:09,admin,admin
834,144842,5115,22773,6085,1,0,N,N,N,CP_Drtn,TT_Task,DT_FixedDUR2,RV_OK,TK_NotStart,PMS100,Compile Sealines and transportation bid package,,456,0,112,0,0,0,112,0,0,0,,,,2012-08-28 08:00,2012-09-16 16:00,,2012-06-03 08:00,2012-06-20 16:00,2012-06-03 08:00,2012-06-20 16:00,2012-06-03 08:00,2012-06-20 16:00,,2012-08-28 08:00,2012-09-16 16:00,,PT_Normal,,,,,8bcJl9j9UUaSoIMTLZL6mQ,,,,N,0,0,,,2012-06-20 09:18,2012-06-20 10:08,admin,admin
835,144843,5115,22773,6085,1,0,N,N,N,CP_Drtn,TT_Task,DT_FixedDUR2,RV_OK,TK_NotStart,PMS105,Negotiation/award sealines and transporation package,,456,0,720,0,0,0,720,0,0,0,,,,2012-09-17 08:00,2013-01-27 16:00,,2012-06-21 08:00,2012-11-07 16:00,2012-06-21 08:00,2012-11-07 16:00,2012-06-21 08:00,2012-11-07 16:00,,2012-09-17 08:00,2013-01-27 16:00,,PT_Normal,,,,,z6lBdTNreEeBeDDWKKl6UQ,,,,N,0,0,,,2012-06-20 09:19,2012-06-20 10:08,admin,admin
836,144844,5115,22773,6085,1,0,N,N,N,CP_Drtn,TT_Task,DT_FixedDUR2,RV_OK,TK_NotStart,PMS110,Mobilization of Sealines and transportation Contractor,,456,0,168,0,0,0,168,0,0,0,,,,2013-01-28 08:00,2013-02-25 16:00,,2012-11-08 08:00,2012-12-06 16:00,2012-11-08 08:00,2012-12-06 16:00,2012-11-08 08:00,2012-12-06 16:00,,2013-01-28 08:00,2013-02-25 16:00,,PT_Normal,,,,,FFMT9VxYtkSFieB5gAzJMQ,,,,N,0,0,,,2012-06-20 09:20,2012-06-20 10:08,admin,admin
837,144845,5115,22773,6085,1,0,N,N,N,CP_Drtn,TT_Task,DT_FixedDUR2,RV_OK,TK_NotStart,OFF02,Compile Platfrom installation ITB,,0,0,40,0,0,0,40,0,0,0,2012-06-13 08:00,,,2012-06-13 08:00,2012-06-19 16:00,,2012-06-13 08:00,2012-06-19 16:00,2012-06-13 08:00,2012-06-19 16:00,2012-06-13 08:00,2012-06-19 16:00,,2012-06-13 08:00,2012-06-19 16:00,CS_MSO,PT_Normal,,,,,rX4wpLyHJEmQXVbdCYoVUQ,,,,Y,0,0,,,2012-06-20 09:22,2012-06-20 10:09,admin,admin
838,144846,5115,22773,6085,1,0,N,N,N,CP_Drtn,TT_Task,DT_FixedDUR2,RV_OK,TK_NotStart,OFF04,Bid platfrom installation package,,0,0,480,0,0,0,480,0,0,0,,,,2012-06-20 08:00,2012-09-18 16:00,,2012-06-20 08:00,2012-09-18 16:00,2012-06-20 08:00,2012-09-18 16:00,2012-06-20 08:00,2012-09-18 16:00,,2012-06-20 08:00,2012-09-18 16:00,,PT_Normal,,,,,ZSX4fkgQ00CdPVDcU9WkuQ,,,,Y,0,0,,,2012-06-20 09:23,2012-06-20 10:09,admin,admin
839,144847,5115,22773,6085,1,0,N,N,N,CP_Drtn,TT_Task,DT_FixedDUR2,RV_OK,TK_NotStart,OFF06,TE platfrom installation package,,0,0,168,0,0,0,168,0,0,0,,,,2012-09-19 08:00,2012-10-17 16:00,,2012-09-19 08:00,2012-10-17 16:00,2012-09-19 08:00,2012-10-17 16:00,2012-09-19 08:00,2012-10-17 16:00,,2012-09-19 08:00,2012-10-17 16:00,,PT_Normal,,,,,CfAVA0R13kGJxOOtJvRyvg,,,,Y,0,0,,,2012-06-20 09:24,2012-06-20 10:09,admin,admin
840,144848,5115,22773,6085,1,0,N,N,N,CP_Drtn,TT_Task,DT_FixedDUR2,RV_OK,TK_NotStart,OFF10,CE and negotiation platfrom installation package,,0,0,400,0,0,0,400,0,0,0,,,,2012-10-18 08:00,2013-01-02 16:00,,2012-10-18 08:00,2013-01-02 16:00,2012-10-18 08:00,2013-01-02 16:00,2012-10-18 08:00,2013-01-02 16:00,,2012-10-18 08:00,2013-01-02 16:00,,PT_Normal,,,,,IE62V732xkCKnIQmWIE+Eg,,,,Y,0,0,,,2012-06-20 09:25,2012-06-20 10:09,admin,admin
841,144849,5115,22773,6085,1,0,N,N,N,CP_Drtn,TT_Task,DT_FixedDUR2,RV_OK,TK_NotStart,OFF20,Award offshore installation package,,0,0,56,0,0,0,56,0,0,0,,,,2013-01-03 08:00,2013-01-13 16:00,,2013-01-03 08:00,2013-01-13 16:00,2013-01-03 08:00,2013-01-13 16:00,2013-01-03 08:00,2013-01-13 16:00,,2013-01-03 08:00,2013-01-13 16:00,,PT_Normal,,,,,Z0m0cxrKWkGwnmZi76IQIA,,,,Y,0,0,,,2012-06-20 09:26,2012-06-20 10:09,admin,admin
842,144850,5115,22773,6085,1,0,N,N,N,CP_Drtn,TT_Task,DT_FixedDUR2,RV_OK,TK_NotStart,OFF30,Mobilize platform installation contractor,,0,0,240,0,0,0,240,0,0,0,,,,2013-01-14 08:00,2013-02-24 16:00,,2013-01-14 08:00,2013-02-24 16:00,2013-01-14 08:00,2013-02-24 16:00,2013-01-14 08:00,2013-02-24 16:00,,2013-01-14 08:00,2013-02-24 16:00,,PT_Normal,,,,,gUR4hIxMh0SUGDYvwvpD8g,,,,Y,0,0,,,2012-06-20 09:27,2012-06-20 10:09,admin,admin
843,144851,5115,22773,6085,1,0,N,N,N,CP_Drtn,TT_Task,DT_FixedDUR2,RV_OK,TK_NotStart,PM01,Compile transportation and sealines package,,0,0,120,0,0,0,120,0,0,0,2012-06-20 08:00,,,2012-06-20 08:00,2012-07-10 16:00,,2012-06-20 08:00,2012-07-10 16:00,2012-06-20 08:00,2012-07-10 16:00,2012-06-20 08:00,2012-07-10 16:00,,2012-06-20 08:00,2012-07-10 16:00,CS_MSO,PT_Normal,,,,,D86HRlVos02nCYvqun7+sw,,,,N,0,0,,,2012-06-20 09:38,2012-06-20 09:44,admin,admin
844,144852,5115,22773,6085,1,0,N,N,N,CP_Drtn,TT_Task,DT_FixedDUR2,RV_OK,TK_NotStart,PM04,Negotiate Sealines and transportation package,,440,0,520,0,0,0,520,0,0,0,,,,2012-10-03 08:00,2013-01-08 16:00,,2012-07-11 08:00,2012-10-16 16:00,2012-07-11 08:00,2012-10-16 16:00,2012-07-11 08:00,2012-10-16 16:00,,2012-10-03 08:00,2013-01-08 16:00,,PT_Normal,,,,,5DR6Met7TUKv8C4t77jJCg,,,,N,0,0,,,2012-06-20 09:40,2012-06-20 10:08,admin,admin
845,144853,5115,22773,6085,1,0,N,N,N,CP_Drtn,TT_Task,DT_FixedDUR2,RV_OK,TK_NotStart,PM06,Award transportation and sealines package,,440,0,80,0,0,0,80,0,0,0,,,,2013-01-09 08:00,2013-01-22 16:00,,2012-10-17 08:00,2012-11-06 16:00,2012-10-17 08:00,2012-11-06 16:00,2012-10-17 08:00,2012-11-06 16:00,,2013-01-09 08:00,2013-01-22 16:00,,PT_Normal,,,,,OigspTil9EOyxzuYD9tKsA,,,,N,0,0,,,2012-06-20 09:41,2012-06-20 10:08,admin,admin
846,144854,5115,22773,6085,1,0,N,N,N,CP_Drtn,TT_Task,DT_FixedDUR2,RV_OK,TK_NotStart,PM16,Mobilizae transportation and sealines contractor,,440,0,112,0,0,0,112,0,0,0,,,,2013-01-23 08:00,2013-02-11 16:00,,2012-11-07 08:00,2012-11-26 16:00,2012-11-07 08:00,2012-11-26 16:00,2012-11-07 08:00,2012-11-26 16:00,,2013-01-23 08:00,2013-02-11 16:00,,PT_Normal,,,,,oqYYkJ/UYUuhhOaVFktmFg,,,,N,0,0,,,2012-06-20 09:41,2012-06-20 10:08,admin,admin
847,144855,5115,22773,6085,1,0,N,N,N,CP_Drtn,TT_Task,DT_FixedDUR2,RV_OK,TK_NotStart,DRIL00,Mobilize Drilling Rig,,0,0,40,0,0,0,40,0,0,0,,,,2013-04-07 08:00,2013-04-11 16:00,,2013-04-07 08:00,2013-04-11 16:00,2013-04-07 08:00,2013-04-11 16:00,2013-04-07 08:00,2013-04-11 16:00,,2013-04-07 08:00,2013-04-11 16:00,,PT_Normal,,,,,lXXFd4l3NEW/XnvyI4/pUw,,,,Y,0,0,,,2012-06-20 09:56,2012-06-20 10:09,admin,admin
848,144856,5115,22841,6085,1,100,N,N,N,CP_Drtn,TT_Task,DT_FixedDUR2,RV_OK,TK_Complete,4229EEL330,Issue MRQ for solar power unit,,,,0,0,0,0,56,0,0,0,,2011-08-15 08:00,2011-08-23 16:00,2013-09-26 16:00,2013-09-26 16:00,,2012-06-02 00:00,2012-06-02 00:00,,,2011-08-15 08:00,2011-08-23 16:00,,,,,PT_Normal,,,,,GUXbr30JbkaNEBLTRxWceQ,WmAJvILVGES5mrZupbXEPA,,,N,0,0,,,2012-06-20 10:03,2012-06-20 10:09,admin,admin
849,144857,5115,22859,5686,0,0,N,N,N,CP_Drtn,TT_Mile,DT_FixedDrtn,RV_OK,TK_NotStart,LOPS01,Arrival of 01st Shipment Material Barge ( P/L Spools),,0,128,0,0,0,0,0,0,0,0,2012-09-15 08:00,,,2012-09-15 08:00,2012-09-15 08:00,,2012-09-15 08:00,2012-09-15 08:00,2012-09-15 08:00,2012-09-15 08:00,2012-09-15 08:00,2012-09-15 08:00,,2012-09-15 08:00,2012-09-15 08:00,CS_MSO,PT_Normal,,,,,S7kQ8GkBrkSmFGHsDtF1MA,B4Hx/kkxQZKPJEG8DiZMqQ,,,N,0,0,,,2012-06-20 10:24,2012-06-20 10:24,admin,admin
850,144858,5115,22859,5686,1,0,N,N,N,CP_Drtn,TT_Task,DT_FixedDUR2,RV_OK,TK_NotStart,LOPS02,1st Shipment Material Barge Preparation,,1088,0,96,0,0,0,96,0,0,0,,,,2013-03-20 08:00,2013-04-02 16:00,,2012-10-03 08:00,2012-10-17 16:00,2012-10-03 08:00,2012-10-17 16:00,2012-10-03 08:00,2012-10-17 16:00,,2013-03-20 08:00,2013-04-02 16:00,,PT_Normal,,,,,L3xgauHSuUCI51sgQA/K5w,ffJmeitJThGKpY3WVSZDNQ,,,N,0,0,,,2012-06-20 10:24,2012-06-20 10:24,admin,admin
851,144859,5115,22859,5686,1,0,N,N,N,CP_Drtn,TT_Task,DT_FixedDUR2,RV_OK,TK_NotStart,LOPS03,"L/O & Sea Fastening (P/L Spools 18"""" & 8"""")",,1088,0,32,0,0,0,32,0,0,0,,,,2013-04-03 08:00,2013-04-07 16:00,,2012-10-18 08:00,2012-10-22 16:00,2012-10-18 08:00,2012-10-22 16:00,2012-10-18 08:00,2012-10-22 16:00,,2013-04-03 08:00,2013-04-07 16:00,,PT_Normal,,,,,m0yIFou+Y0OjzN4odqH6Mg,0IwOiWOuTGWgp9eZJV76QQ,,,N,0,0,,,2012-06-20 10:24,2012-06-20 10:24,admin,admin
852,144860,5115,22860,5686,0,0,N,N,N,CP_Drtn,TT_Mile,DT_FixedDrtn,RV_OK,TK_NotStart,LOJK01,Arrival of 02nd Shipment Material Barge ( Jacket and Piles ),,0,263.983333,0,0,0,0,0,0,0,0,2012-12-01 08:01,,,2012-12-01 08:01,2012-12-01 08:01,,2012-12-01 08:01,2012-12-01 08:01,2012-12-01 08:01,2012-12-01 08:01,2012-12-01 08:01,2012-12-01 08:01,,2012-12-01 08:01,2012-12-01 08:01,CS_MSO,PT_Normal,,,,,FDqsG+pAdEes0Lb+qhJRoA,TZSnzFwbTP2WYUW5WMHAXA,,,N,0,0,,,2012-06-20 10:24,2012-06-20 10:24,admin,admin
853,144861,5115,22860,5686,1,0,N,N,N,CP_Drtn,TT_Task,DT_FixedDUR2,RV_OK,TK_NotStart,LOJK02,02nd Shipment Material Barge Preparation,,208,0,96,0,0,0,96,0,0,0,,,,2013-02-11 08:00,2013-02-24 16:00,,2013-01-09 08:00,2013-01-22 16:00,2013-01-09 08:00,2013-01-22 16:00,2013-01-09 08:00,2013-01-22 16:00,,2013-02-11 08:00,2013-02-24 16:00,,PT_Normal,,,,,NboH+CXr20yYm9CbWUBjHw,XbtAi6jCTDyBXVHSpw5OSQ,,,N,0,0,,,2012-06-20 10:24,2012-06-20 10:24,admin,admin
854,144862,5115,22860,5686,1,0,N,N,N,CP_Drtn,TT_Task,DT_FixedDUR2,RV_OK,TK_NotStart,LOJK03,L/O & Sea fastening ( Jacket & Piles ),,208,0,56,0,0,0,56,0,0,0,,,,2013-02-25 08:00,2013-03-04 16:00,,2013-01-23 08:00,2013-01-31 16:00,2013-01-23 08:00,2013-01-31 16:00,2013-01-23 08:00,2013-01-31 16:00,,2013-02-25 08:00,2013-03-04 16:00,,PT_Normal,,,,,oQgHk1x6UEOtB5fxgQPeBg,0h5qrf7kSZW3DGU5wFjrDw,,,N,0,0,,,2012-06-20 10:24,2012-06-20 10:24,admin,admin
855,144863,5115,22861,5686,0,0,N,N,N,CP_Drtn,TT_Mile,DT_FixedDrtn,RV_OK,TK_NotStart,LODK01,Arrival of 03rd Shipment Material Barge ( Deck C/W TSF ),,-0.016667,104,0,0,0,0,0,0,0,0,2013-03-01 08:01,,,2013-02-28 15:59,2013-02-28 15:59,,2013-03-02 08:00,2013-03-02 08:00,2013-03-02 08:00,2013-03-02 08:00,2013-03-02 08:00,2013-03-02 08:00,,2013-02-28 15:59,2013-02-28 15:59,CS_MSO,PT_Normal,,,,,/5ZesU4SdUyRZHGRcDdumg,ExIEDAbgRLSmFck0X+OxYg,,,N,0,0,,,2012-06-20 10:24,2012-06-20 10:24,admin,admin
856,144864,5115,22861,5686,1,0,N,N,N,CP_Drtn,TT_Task,DT_FixedDUR2,RV_OK,TK_NotStart,LODK02,3rd Shipment Material Barge Preparation,,0,0,96,0,0,0,96,0,0,0,,,,2013-03-17 08:00,2013-03-30 16:00,,2013-03-17 08:00,2013-03-30 16:00,2013-03-17 08:00,2013-03-30 16:00,2013-03-17 08:00,2013-03-30 16:00,,2013-03-17 08:00,2013-03-30 16:00,,PT_Normal,,,,,9+OeTSRVAUmy7E8IqPm05w,lPDdUYuUTIydlmlcan93BQ,,,Y,0,0,,,2012-06-20 10:24,2012-06-20 10:24,admin,admin
857,144865,5115,22861,5686,1,0,N,N,N,CP_Drtn,TT_Task,DT_FixedDUR2,RV_OK,TK_NotStart,LODK03,L/O & Sea fastening ( Deck),,0,0,56,0,0,0,56,0,0,0,,,,2013-03-31 08:00,2013-04-07 16:00,,2013-03-31 08:00,2013-04-07 16:00,2013-03-31 08:00,2013-04-07 16:00,2013-03-31 08:00,2013-04-07 16:00,,2013-03-31 08:00,2013-04-07 16:00,,PT_Normal,,,,,rogLAyztaEKBCFEL+kaGoQ,a29m8wZtSbmmAh/FPoIQAw,,,Y,0,0,,,2012-06-20 10:24,2012-06-20 10:24,admin,admin
858,144866,5115,22859,5686,0,0,N,N,N,CP_Drtn,TT_Mile,DT_FixedDrtn,RV_OK,TK_NotStart,LOPS11,Arrival of 01st Shipment Material Barge ( P/L Spools),,0,128,0,0,0,0,0,0,0,0,2012-09-15 08:00,,,2012-09-15 08:00,2012-09-15 08:00,,2012-09-15 08:00,2012-09-15 08:00,2012-09-15 08:00,2012-09-15 08:00,2012-09-15 08:00,2012-09-15 08:00,,2012-09-15 08:00,2012-09-15 08:00,CS_MSO,PT_Normal,,,,,kTV36dhqPkmdzzOitj9tgQ,xehV9+x7ZE2jS/zzmhzWQA,,,N,0,0,,,2012-06-20 10:24,2012-06-20 10:24,admin,admin
859,144867,5115,22859,5686,1,0,N,N,N,CP_Drtn,TT_Task,DT_FixedDUR2,RV_OK,TK_NotStart,LOPS12,1st Shipment Material Barge Preparation,,1088,0,96,0,0,0,96,0,0,0,,,,2013-03-20 08:00,2013-04-02 16:00,,2012-10-03 08:00,2012-10-17 16:00,2012-10-03 08:00,2012-10-17 16:00,2012-10-03 08:00,2012-10-17 16:00,,2013-03-20 08:00,2013-04-02 16:00,,PT_Normal,,,,,AE9hwhxeLEaMJU6lhgPV4g,ndqnrpRNm0Kh7Ee9x77pLg,,,N,0,0,,,2012-06-20 10:24,2012-06-20 10:24,admin,admin
860,144868,5115,22859,5686,1,0,N,N,N,CP_Drtn,TT_Task,DT_FixedDUR2,RV_OK,TK_NotStart,LOPS13,"L/O & Sea Fastening (P/L Spools 18"""" & 8"""")",,1088,0,32,0,0,0,32,0,0,0,,,,2013-04-03 08:00,2013-04-07 16:00,,2012-10-18 08:00,2012-10-22 16:00,2012-10-18 08:00,2012-10-22 16:00,2012-10-18 08:00,2012-10-22 16:00,,2013-04-03 08:00,2013-04-07 16:00,,PT_Normal,,,,,3uXHriHM9kOH5Vt/8RQZ/A,kp9L75XeSkWVYE8hGyBpLQ,,,N,0,0,,,2012-06-20 10:24,2012-06-20 10:24,admin,admin
861,144869,5115,22860,5686,0,0,N,N,N,CP_Drtn,TT_Mile,DT_FixedDrtn,RV_OK,TK_NotStart,LOJK11,Arrival of 02nd Shipment Material Barge ( Jacket and Piles ),,0,263.983333,0,0,0,0,0,0,0,0,2012-12-01 08:01,,,2012-12-01 08:01,2012-12-01 08:01,,2012-12-01 08:01,2012-12-01 08:01,2012-12-01 08:01,2012-12-01 08:01,2012-12-01 08:01,2012-12-01 08:01,,2012-12-01 08:01,2012-12-01 08:01,CS_MSO,PT_Normal,,,,,NiKErCk2AUGdIcCA6BGvkA,/rdQ3u43Y0aVeyWgwwuYrQ,,,N,0,0,,,2012-06-20 10:24,2012-06-20 10:24,admin,admin
862,144870,5115,22860,5686,1,0,N,N,N,CP_Drtn,TT_Task,DT_FixedDUR2,RV_OK,TK_NotStart,LOJK12,02nd Shipment Material Barge Preparation,,208,0,96,0,0,0,96,0,0,0,,,,2013-02-11 08:00,2013-02-24 16:00,,2013-01-09 08:00,2013-01-22 16:00,2013-01-09 08:00,2013-01-22 16:00,2013-01-09 08:00,2013-01-22 16:00,,2013-02-11 08:00,2013-02-24 16:00,,PT_Normal,,,,,Mf5ZbbMe9kWkht/9oxz7tA,S7wGNTJDfUW+8AjycDcj2g,,,N,0,0,,,2012-06-20 10:24,2012-06-20 10:24,admin,admin
863,144871,5115,22860,5686,1,0,N,N,N,CP_Drtn,TT_Task,DT_FixedDUR2,RV_OK,TK_NotStart,LOJK13,L/O & Sea fastening ( Jacket & Piles ),,208,0,56,0,0,0,56,0,0,0,,,,2013-02-25 08:00,2013-03-04 16:00,,2013-01-23 08:00,2013-01-31 16:00,2013-01-23 08:00,2013-01-31 16:00,2013-01-23 08:00,2013-01-31 16:00,,2013-02-25 08:00,2013-03-04 16:00,,PT_Normal,,,,,a3AwEV57SES7hL1q5Ho+wA,T2pkffL22UqmUBjuIecM7w,,,N,0,0,,,2012-06-20 10:24,2012-06-20 10:24,admin,admin
864,144872,5115,22861,5686,0,0,N,N,N,CP_Drtn,TT_Mile,DT_FixedDrtn,RV_OK,TK_NotStart,LODK11,Arrival of 03rd Shipment Material Barge ( Deck C/W TSF ),,-0.016667,104,0,0,0,0,0,0,0,0,2013-03-01 08:01,,,2013-02-28 15:59,2013-02-28 15:59,,2013-03-02 08:00,2013-03-02 08:00,2013-03-02 08:00,2013-03-02 08:00,2013-03-02 08:00,2013-03-02 08:00,,2013-02-28 15:59,2013-02-28 15:59,CS_MSO,PT_Normal,,,,,a100cBwVMUSGFNA4sWapxg,+yVxVOPraUyK1NRhdp+wfA,,,N,0,0,,,2012-06-20 10:24,2012-06-20 10:24,admin,admin
865,144873,5115,22861,5686,1,0,N,N,N,CP_Drtn,TT_Task,DT_FixedDUR2,RV_OK,TK_NotStart,LODK12,3rd Shipment Material Barge Preparation,,0,0,96,0,0,0,96,0,0,0,,,,2013-03-17 08:00,2013-03-30 16:00,,2013-03-17 08:00,2013-03-30 16:00,2013-03-17 08:00,2013-03-30 16:00,2013-03-17 08:00,2013-03-30 16:00,,2013-03-17 08:00,2013-03-30 16:00,,PT_Normal,,,,,op2djtW7SEm7/irzGu9DBg,udpKSE0PREWpEz84cupRDw,,,Y,0,0,,,2012-06-20 10:24,2012-06-20 10:24,admin,admin
866,144874,5115,22861,5686,1,0,N,N,N,CP_Drtn,TT_Task,DT_FixedDUR2,RV_OK,TK_NotStart,LODK13,L/O & Sea fastening ( Deck),,0,0,56,0,0,0,56,0,0,0,,,,2013-03-31 08:00,2013-04-07 16:00,,2013-03-31 08:00,2013-04-07 16:00,2013-03-31 08:00,2013-04-07 16:00,2013-03-31 08:00,2013-04-07 16:00,,2013-03-31 08:00,2013-04-07 16:00,,PT_Normal,,,,,6dR0aocW206RBJtmhCvCig,InSRN6FydkWjBf3988Pjxg,,,Y,0,0,,,2012-06-20 10:24,2012-06-20 10:24,admin,admin
867,144875,5115,22859,5686,0,0,N,N,N,CP_Drtn,TT_Mile,DT_FixedDrtn,RV_OK,TK_NotStart,LOPS21,Arrival of 01st Shipment Material Barge ( P/L Spools),,0,128,0,0,0,0,0,0,0,0,2012-09-15 08:00,,,2012-09-15 08:00,2012-09-15 08:00,,2012-09-15 08:00,2012-09-15 08:00,2012-09-15 08:00,2012-09-15 08:00,2012-09-15 08:00,2012-09-15 08:00,,2012-09-15 08:00,2012-09-15 08:00,CS_MSO,PT_Normal,,,,,pfCeEkfJrEiZWpyruvN/uw,OzUFIPks302wsyR+uazpaQ,,,N,0,0,,,2012-06-20 10:24,2012-06-20 10:24,admin,admin
868,144876,5115,22859,5686,1,0,N,N,N,CP_Drtn,TT_Task,DT_FixedDUR2,RV_OK,TK_NotStart,LOPS22,1st Shipment Material Barge Preparation,,1088,0,96,0,0,0,96,0,0,0,,,,2013-03-20 08:00,2013-04-02 16:00,,2012-10-03 08:00,2012-10-17 16:00,2012-10-03 08:00,2012-10-17 16:00,2012-10-03 08:00,2012-10-17 16:00,,2013-03-20 08:00,2013-04-02 16:00,,PT_Normal,,,,,jbNcAU160U+txJh23tWJKg,hG7/16szS0WaIWMhbYJ4Sw,,,N,0,0,,,2012-06-20 10:24,2012-06-20 10:24,admin,admin
869,144877,5115,22859,5686,1,0,N,N,N,CP_Drtn,TT_Task,DT_FixedDUR2,RV_OK,TK_NotStart,LOPS23,"L/O & Sea Fastening (P/L Spools 18"""" & 8"""")",,1088,0,32,0,0,0,32,0,0,0,,,,2013-04-03 08:00,2013-04-07 16:00,,2012-10-18 08:00,2012-10-22 16:00,2012-10-18 08:00,2012-10-22 16:00,2012-10-18 08:00,2012-10-22 16:00,,2013-04-03 08:00,2013-04-07 16:00,,PT_Normal,,,,,YKznKpUAHU2l139/UV/zyQ,9X0C/NlmhEKajjVgmtxwCQ,,,N,0,0,,,2012-06-20 10:24,2012-06-20 10:24,admin,admin
870,144878,5115,22860,5686,0,0,N,N,N,CP_Drtn,TT_Mile,DT_FixedDrtn,RV_OK,TK_NotStart,LOJK21,Arrival of 02nd Shipment Material Barge ( Jacket and Piles ),,0,263.983333,0,0,0,0,0,0,0,0,2012-12-01 08:01,,,2012-12-01 08:01,2012-12-01 08:01,,2012-12-01 08:01,2012-12-01 08:01,2012-12-01 08:01,2012-12-01 08:01,2012-12-01 08:01,2012-12-01 08:01,,2012-12-01 08:01,2012-12-01 08:01,CS_MSO,PT_Normal,,,,,H3cTeerB1EKpKxuB018hLg,/YqSb2uDrUy1yz+LqhHkBQ,,,N,0,0,,,2012-06-20 10:24,2012-06-20 10:24,admin,admin
871,144879,5115,22860,5686,1,0,N,N,N,CP_Drtn,TT_Task,DT_FixedDUR2,RV_OK,TK_NotStart,LOJK22,02nd Shipment Material Barge Preparation,,208,0,96,0,0,0,96,0,0,0,,,,2013-02-11 08:00,2013-02-24 16:00,,2013-01-09 08:00,2013-01-22 16:00,2013-01-09 08:00,2013-01-22 16:00,2013-01-09 08:00,2013-01-22 16:00,,2013-02-11 08:00,2013-02-24 16:00,,PT_Normal,,,,,WUwYv2DJfkCVykBJZzKasg,ocSaukuEpkOIabB/W5qCDQ,,,N,0,0,,,2012-06-20 10:24,2012-06-20 10:24,admin,admin
872,144880,5115,22860,5686,1,0,N,N,N,CP_Drtn,TT_Task,DT_FixedDUR2,RV_OK,TK_NotStart,LOJK23,L/O & Sea fastening ( Jacket & Piles ),,208,0,56,0,0,0,56,0,0,0,,,,2013-02-25 08:00,2013-03-04 16:00,,2013-01-23 08:00,2013-01-31 16:00,2013-01-23 08:00,2013-01-31 16:00,2013-01-23 08:00,2013-01-31 16:00,,2013-02-25 08:00,2013-03-04 16:00,,PT_Normal,,,,,QOqsvCw4v0GmMobt310ejQ,/lwB05gFY0WNrD1Qr8RDPA,,,N,0,0,,,2012-06-20 10:24,2012-06-20 10:24,admin,admin
873,144881,5115,22861,5686,0,0,N,N,N,CP_Drtn,TT_Mile,DT_FixedDrtn,RV_OK,TK_NotStart,LODK21,Arrival of 03rd Shipment Material Barge ( Deck C/W TSF ),,-0.016667,104,0,0,0,0,0,0,0,0,2013-03-01 08:01,,,2013-02-28 15:59,2013-02-28 15:59,,2013-03-02 08:00,2013-03-02 08:00,2013-03-02 08:00,2013-03-02 08:00,2013-03-02 08:00,2013-03-02 08:00,,2013-02-28 15:59,2013-02-28 15:59,CS_MSO,PT_Normal,,,,,CuT2kEsVm06pBKcLd8W3bg,+bmImlAl+EeMuO3E8IZLbQ,,,N,0,0,,,2012-06-20 10:24,2012-06-20 10:24,admin,admin
874,144882,5115,22861,5686,1,0,N,N,N,CP_Drtn,TT_Task,DT_FixedDUR2,RV_OK,TK_NotStart,LODK22,3rd Shipment Material Barge Preparation,,0,0,96,0,0,0,96,0,0,0,,,,2013-03-17 08:00,2013-03-30 16:00,,2013-03-17 08:00,2013-03-30 16:00,2013-03-17 08:00,2013-03-30 16:00,2013-03-17 08:00,2013-03-30 16:00,,2013-03-17 08:00,2013-03-30 16:00,,PT_Normal,,,,,9lGxLlP5Ak63vQtw4WMHAw,bMaFX4P8DE6/oRnqQAQohg,,,Y,0,0,,,2012-06-20 10:24,2012-06-20 10:24,admin,admin
875,144883,5115,22861,5686,1,0,N,N,N,CP_Drtn,TT_Task,DT_FixedDUR2,RV_OK,TK_NotStart,LODK23,L/O & Sea fastening ( Deck),,0,0,56,0,0,0,56,0,0,0,,,,2013-03-31 08:00,2013-04-07 16:00,,2013-03-31 08:00,2013-04-07 16:00,2013-03-31 08:00,2013-04-07 16:00,2013-03-31 08:00,2013-04-07 16:00,,2013-03-31 08:00,2013-04-07 16:00,,PT_Normal,,,,,xSNZPPaaikWEqFAQ+NlbBg,spE5xHjDeUSbwXz8P4JYbA,,,Y,0,0,,,2012-06-20 10:24,2012-06-20 10:24,admin,admin
876,144884,5115,22859,5686,0,0,N,N,N,CP_Drtn,TT_Mile,DT_FixedDrtn,RV_OK,TK_NotStart,LOPS31,Arrival of 01st Shipment Material Barge ( P/L Spools),,0,128,0,0,0,0,0,0,0,0,2012-09-15 08:00,,,2012-09-15 08:00,2012-09-15 08:00,,2012-09-15 08:00,2012-09-15 08:00,2012-09-15 08:00,2012-09-15 08:00,2012-09-15 08:00,2012-09-15 08:00,,2012-09-15 08:00,2012-09-15 08:00,CS_MSO,PT_Normal,,,,,+Kwto4eXD0Swgy9LPRkQRA,Dyg+a2NAokqFGcF4r9B25Q,,,N,0,0,,,2012-06-20 10:24,2012-06-20 10:24,admin,admin
877,144885,5115,22859,5686,1,0,N,N,N,CP_Drtn,TT_Task,DT_FixedDUR2,RV_OK,TK_NotStart,LOPS32,1st Shipment Material Barge Preparation,,1088,0,96,0,0,0,96,0,0,0,,,,2013-03-20 08:00,2013-04-02 16:00,,2012-10-03 08:00,2012-10-17 16:00,2012-10-03 08:00,2012-10-17 16:00,2012-10-03 08:00,2012-10-17 16:00,,2013-03-20 08:00,2013-04-02 16:00,,PT_Normal,,,,,rnkhlp8fz0eTa2z8sts0wg,KoXyzm4kEkadNJDSUREknA,,,N,0,0,,,2012-06-20 10:24,2012-06-20 10:24,admin,admin
878,144886,5115,22859,5686,1,0,N,N,N,CP_Drtn,TT_Task,DT_FixedDUR2,RV_OK,TK_NotStart,LOPS33,"L/O & Sea Fastening (P/L Spools 18"""" & 8"""")",,1088,0,32,0,0,0,32,0,0,0,,,,2013-04-03 08:00,2013-04-07 16:00,,2012-10-18 08:00,2012-10-22 16:00,2012-10-18 08:00,2012-10-22 16:00,2012-10-18 08:00,2012-10-22 16:00,,2013-04-03 08:00,2013-04-07 16:00,,PT_Normal,,,,,fKgrEzJXpUCqu+PCj1F5EQ,Pc/YYtCKm02U5c994EZd+A,,,N,0,0,,,2012-06-20 10:24,2012-06-20 10:24,admin,admin
879,144887,5115,22860,5686,0,0,N,N,N,CP_Drtn,TT_Mile,DT_FixedDrtn,RV_OK,TK_NotStart,LOJK31,Arrival of 02nd Shipment Material Barge ( Jacket and Piles ),,0,263.983333,0,0,0,0,0,0,0,0,2012-12-01 08:01,,,2012-12-01 08:01,2012-12-01 08:01,,2012-12-01 08:01,2012-12-01 08:01,2012-12-01 08:01,2012-12-01 08:01,2012-12-01 08:01,2012-12-01 08:01,,2012-12-01 08:01,2012-12-01 08:01,CS_MSO,PT_Normal,,,,,DWhN7mqLdEaxU6BQw6ZRBQ,twClvn9nfkSAZ2CGd6SI2g,,,N,0,0,,,2012-06-20 10:24,2012-06-20 10:24,admin,admin
880,144888,5115,22860,5686,1,0,N,N,N,CP_Drtn,TT_Task,DT_FixedDUR2,RV_OK,TK_NotStart,LOJK32,02nd Shipment Material Barge Preparation,,208,0,96,0,0,0,96,0,0,0,,,,2013-02-11 08:00,2013-02-24 16:00,,2013-01-09 08:00,2013-01-22 16:00,2013-01-09 08:00,2013-01-22 16:00,2013-01-09 08:00,2013-01-22 16:00,,2013-02-11 08:00,2013-02-24 16:00,,PT_Normal,,,,,Pi0020lFkUi9njxr179BYw,oOyb74rhgkOJ7CwJQccUrg,,,N,0,0,,,2012-06-20 10:24,2012-06-20 10:24,admin,admin
881,144889,5115,22860,5686,1,0,N,N,N,CP_Drtn,TT_Task,DT_FixedDUR2,RV_OK,TK_NotStart,LOJK33,L/O & Sea fastening ( Jacket & Piles ),,208,0,56,0,0,0,56,0,0,0,,,,2013-02-25 08:00,2013-03-04 16:00,,2013-01-23 08:00,2013-01-31 16:00,2013-01-23 08:00,2013-01-31 16:00,2013-01-23 08:00,2013-01-31 16:00,,2013-02-25 08:00,2013-03-04 16:00,,PT_Normal,,,,,HoW8+s0o5Uaf4cYpuvgEsg,CYmaXCva40q7ILqupixf4Q,,,N,0,0,,,2012-06-20 10:24,2012-06-20 10:24,admin,admin
882,144890,5115,22861,5686,0,0,N,N,N,CP_Drtn,TT_Mile,DT_FixedDrtn,RV_OK,TK_NotStart,LODK31,Arrival of 03rd Shipment Material Barge ( Deck C/W TSF ),,-0.016667,104,0,0,0,0,0,0,0,0,2013-03-01 08:01,,,2013-02-28 15:59,2013-02-28 15:59,,2013-03-02 08:00,2013-03-02 08:00,2013-03-02 08:00,2013-03-02 08:00,2013-03-02 08:00,2013-03-02 08:00,,2013-02-28 15:59,2013-02-28 15:59,CS_MSO,PT_Normal,,,,,lMAoYk2wZ0KkqQil7eiPew,43qRNQrFQk+Kk0OAmvdiKg,,,N,0,0,,,2012-06-20 10:24,2012-06-20 10:24,admin,admin
883,144891,5115,22861,5686,1,0,N,N,N,CP_Drtn,TT_Task,DT_FixedDUR2,RV_OK,TK_NotStart,LODK32,3rd Shipment Material Barge Preparation,,0,0,96,0,0,0,96,0,0,0,,,,2013-03-17 08:00,2013-03-30 16:00,,2013-03-17 08:00,2013-03-30 16:00,2013-03-17 08:00,2013-03-30 16:00,2013-03-17 08:00,2013-03-30 16:00,,2013-03-17 08:00,2013-03-30 16:00,,PT_Normal,,,,,+J0Sq8Fz8kSGQH/ZmeYs+Q,b27pdaUgmEqC59giZ3e4Hw,,,Y,0,0,,,2012-06-20 10:24,2012-06-20 10:24,admin,admin
884,144892,5115,22861,5686,1,0,N,N,N,CP_Drtn,TT_Task,DT_FixedDUR2,RV_OK,TK_NotStart,LODK33,L/O & Sea fastening ( Deck),,0,0,56,0,0,0,56,0,0,0,,,,2013-03-31 08:00,2013-04-07 16:00,,2013-03-31 08:00,2013-04-07 16:00,2013-03-31 08:00,2013-04-07 16:00,2013-03-31 08:00,2013-04-07 16:00,,2013-03-31 08:00,2013-04-07 16:00,,PT_Normal,,,,,9lDx5odXHUamkhIViceqdw,cdhHzmpY6UWV3f/Jk4hxxw,,,Y,0,0,,,2012-06-20 10:24,2012-06-20 10:24,admin,admin
885,145608,5115,22974,5686,0,0,N,N,N,CP_Drtn,TT_FinMile,DT_FixedDrtn,RV_OK,TK_NotStart,GM01,Reciving Fax of Award,,-0.016667,0,0,0,0,0,0,0,0,0,2012-01-20 16:00,,,2012-01-19 16:00,2012-01-19 16:00,,2012-01-21 08:01,2012-01-21 08:01,2012-01-21 08:01,2012-01-21 08:01,2012-01-21 08:01,2012-01-21 08:01,,2012-01-19 16:00,2012-01-19 16:00,CS_MEO,PT_Normal,,,,,MF9ZX9oD5Um7iz8VCJcSCw,,,,N,0,0,,,2012-06-18 09:56,2012-06-20 10:08,admin,admin
886,145609,5115,22974,5686,0,0,N,N,N,CP_Drtn,TT_Mile,DT_FixedDrtn,RV_OK,TK_NotStart,GM02,Project Fab. Start,,1951.983333,1952,0,0,0,0,0,0,0,0,,,,2013-04-07 15:59,2013-04-07 15:59,,2012-06-13 08:00,2012-06-13 08:00,2012-06-13 08:00,2012-06-13 08:00,2012-06-13 08:00,2012-06-13 08:00,,2013-04-07 15:59,2013-04-07 15:59,,PT_Normal,,,,,rsopdd87y0C8zaNksii3RQ,,,,N,0,0,,,2012-06-18 09:56,2012-06-20 10:08,admin,admin
887,145610,5115,22974,5686,0,0,N,N,N,CP_Drtn,TT_Mile,DT_FixedDrtn,RV_OK,TK_NotStart,GM04,Ready for Load out ( 02nd Shipment/ Jacket & Piles ),,208,208,0,0,0,0,0,0,0,0,,,,2013-02-25 08:00,2013-02-25 08:00,,2013-01-23 08:00,2013-01-23 08:00,2013-01-23 08:00,2013-01-23 08:00,2013-01-23 08:00,2013-01-23 08:00,,2013-02-25 08:00,2013-02-25 08:00,,PT_Normal,,,,,0DLlfoTXjEuDbt/TRHG6bQ,,,,N,0,0,,,2012-06-18 09:56,2012-06-20 10:08,admin,admin
888,145611,5115,22974,5686,0,0,N,N,N,CP_Drtn,TT_Mile,DT_FixedDrtn,RV_OK,TK_NotStart,GM05,Ready for Load out ( 03rd Shipment/ Deck C/W TSF ),,55.983333,56,0,0,0,0,0,0,0,0,,,,2013-04-07 15:59,2013-04-07 15:59,,2013-03-31 08:00,2013-03-31 08:00,2013-03-31 08:00,2013-03-31 08:00,2013-03-31 08:00,2013-03-31 08:00,,2013-04-07 15:59,2013-04-07 15:59,,PT_Normal,,,,,+eGdtsqD6ECKMpdr3iY08Q,,,,N,0,0,,,2012-06-18 09:56,2012-06-20 10:08,admin,admin
889,145612,5115,22974,5686,0,0,N,N,N,CP_Drtn,TT_Mile,DT_FixedDrtn,RV_OK,TK_NotStart,GM03,"Ready for Load out (01st Shipment / Pipeline Spools 18"""" & 8"""")",,1119.983333,1120,0,0,0,0,0,0,0,0,,,,2013-04-07 15:59,2013-04-07 15:59,,2012-10-18 08:00,2012-10-18 08:00,2012-10-18 08:00,2012-10-18 08:00,2012-10-18 08:00,2012-10-18 08:00,,2013-04-07 15:59,2013-04-07 15:59,,PT_Normal,,,,,P4n4P0SgC06moN2mpjLUEQ,,,,N,0,0,,,2012-06-18 09:56,2012-06-20 10:08,admin,admin
890,145613,5115,22983,794,1,0,N,N,N,CP_Drtn,TT_Task,DT_FixedDrtn,RV_OK,TK_NotStart,ENS03,Receiving Jacket Primary & Secondary Steel IFC DWG`s,,0,0,1104,0,0,0,1104,0,0,0,2011-11-30 08:01,,,2011-11-30 08:01,2012-04-16 08:01,,2011-11-30 08:01,2012-04-16 08:01,2011-11-30 08:01,2012-04-16 08:01,2011-11-30 08:01,2012-04-16 08:01,,2011-11-30 08:01,2012-04-16 08:01,CS_MSO,PT_Normal,,,,,mTvI7YKr+UeKww16MRJ80w,,,,N,0,0,,,2012-06-18 09:56,2012-06-18 09:56,admin,admin
891,145614,5115,22983,794,0,0,N,N,N,CP_Drtn,TT_FinMile,DT_FixedDrtn,RV_OK,TK_NotStart,ENS04,Receiving Piles IFC DWG`s,,0,720,0,0,0,0,0,0,0,0,2012-01-17 08:01,,,2012-01-17 08:01,2012-01-17 08:01,,2012-01-17 08:01,2012-01-17 08:01,2012-01-17 08:01,2012-01-17 08:01,2012-01-17 08:01,2012-01-17 08:01,,2012-01-17 08:01,2012-01-17 08:01,CS_MEO,PT_Normal,,,,,pEt0tDDcXEyejum4ttccuw,,,,N,0,0,,,2012-06-18 09:56,2012-06-18 09:56,admin,admin
892,145615,5115,22983,794,1,0,N,N,N,CP_Drtn,TT_Task,DT_FixedDUR2,RV_OK,TK_NotStart,ENS05,Receiving Deck Str. Primary & Secondary IFC DWG`s,,0,224,328,0,0,0,328,0,0,0,2012-02-07 08:01,,,2012-02-07 08:01,2012-03-19 08:01,,2012-02-07 08:01,2012-03-19 08:01,2012-02-07 08:01,2012-03-19 08:01,2012-02-07 08:01,2012-03-19 08:01,,2012-02-07 08:01,2012-03-19 08:01,CS_MSO,PT_Normal,,,,,iEjZYaCT2EyMRtaNebGNoA,,,,N,0,0,,,2012-06-18 09:56,2012-06-18 09:56,admin,admin
893,145616,5115,22983,794,0,0,N,N,N,CP_Drtn,TT_FinMile,DT_FixedDrtn,RV_OK,TK_NotStart,ENS01,"Receiving Final Jacket , Boat Land & Piles MTO",,135.983333,135.983333,0,0,0,0,0,0,0,0,,,,2012-02-14 17:00,2012-02-14 17:00,,2012-01-29 08:01,2012-01-29 08:01,2012-01-29 08:01,2012-01-29 08:01,2012-01-29 08:01,2012-01-29 08:01,,2012-02-14 17:00,2012-02-14 17:00,,PT_Normal,,,,,iW7lOGIaxE224PbXvVe2zg,,,,N,0,0,,,2012-06-18 09:56,2012-06-20 10:08,admin,admin
894,145617,5115,22983,794,0,0,N,N,N,CP_Drtn,TT_FinMile,DT_FixedDrtn,RV_OK,TK_NotStart,ENS02,Receiving Final Deck Str. MTO,,135.983333,135.983333,0,0,0,0,0,0,0,0,,,,2012-02-14 17:00,2012-02-14 17:00,,2012-01-29 08:01,2012-01-29 08:01,2012-01-29 08:01,2012-01-29 08:01,2012-01-29 08:01,2012-01-29 08:01,,2012-02-14 17:00,2012-02-14 17:00,,PT_Normal,,,,,XfDlC2zXhkGCpiLGWi9XQA,,,,N,0,0,,,2012-06-18 09:56,2012-06-20 10:08,admin,admin
895,145618,5115,22983,794,1,0,N,N,N,CP_Drtn,TT_Task,DT_FixedDrtn,RV_OK,TK_NotStart,ENS08,Receiving IFC Equipment fixation DWG`s,,0,1559.983333,104,0,0,0,104,0,0,0,2012-04-04 08:01,,,2012-04-04 08:01,2012-04-17 08:01,,2012-04-04 08:01,2012-04-17 08:01,2012-04-04 08:01,2012-04-17 08:01,2012-04-04 08:01,2012-04-17 08:01,,2012-04-04 08:01,2012-04-17 08:01,CS_MSO,PT_Normal,,,,,+lul7gh2AkOnbSEdovxmyg,,,,N,0,0,,,2012-06-18 09:56,2012-06-20 10:08,admin,admin
896,145619,5115,22983,794,1,0,N,N,N,CP_Drtn,TT_Task,DT_FixedDUR2,RV_OK,TK_NotStart,ENS06,Receiving Piping Supports IFC DWG's,,0,3078.983333,160,0,0,0,160,0,0,0,2012-02-28 08:01,,,2012-02-28 08:01,2012-03-19 08:01,,2012-02-28 08:01,2012-03-19 08:01,2012-02-28 08:01,2012-03-19 08:01,2012-02-28 08:01,2012-03-19 08:01,,2012-02-28 08:01,2012-03-19 08:01,CS_MSO,PT_Normal,,,,,j0wcI2WimkmD7KaHtjxFqQ,,,,N,0,0,,,2012-06-18 09:56,2012-06-20 10:08,admin,admin
897,145620,5115,22983,794,1,0,N,N,N,CP_Drtn,TT_Task,DT_FixedDUR2,RV_OK,TK_NotStart,ENS07,Receiving Cable tarys Support IFC DWG's,,0,3022.983333,104,0,0,0,104,0,0,0,2012-03-13 08:01,,,2012-03-13 08:01,2012-03-26 08:01,,2012-03-13 08:01,2012-03-26 08:01,2012-03-13 08:01,2012-03-26 08:01,2012-03-13 08:01,2012-03-26 08:01,,2012-03-13 08:01,2012-03-26 08:01,CS_MSO,PT_Normal,,,,,TeLEHTrMqUGtqFfWSSibew,,,,N,0,0,,,2012-06-18 09:56,2012-06-20 10:08,admin,admin
898,145621,5115,22983,794,1,0,N,N,N,CP_Drtn,TT_Task,DT_FixedDrtn,RV_OK,TK_NotStart,ENS09,"Receiving P/L 8"""" & 18"""" IFC DWG's",,0,2736,160,0,0,0,160,0,0,0,2012-04-10 16:00,,,2012-04-10 16:00,2012-04-30 16:00,,2012-04-10 16:00,2012-04-30 16:00,2012-04-10 16:00,2012-04-30 16:00,2012-04-10 16:00,2012-04-30 16:00,,2012-04-10 16:00,2012-04-30 16:00,CS_MSO,PT_Normal,,,,,d7YayOzLQkO782QHAocdeA,,,,N,0,0,,,2012-06-18 09:56,2012-06-18 09:56,admin,admin
899,145622,5115,22981,794,1,0,N,N,N,CP_Drtn,TT_Task,DT_FixedDrtn,RV_OK,TK_NotStart,ENT03,Receiving Piping ISO`s IFC DWG's,,0,1047.983333,112,0,0,0,112,0,0,0,2012-02-27 08:01,,,2012-02-27 08:01,2012-03-12 08:01,,2012-02-27 08:01,2012-03-12 08:01,2012-02-27 08:01,2012-03-12 08:01,2012-02-27 08:01,2012-03-12 08:01,,2012-02-27 08:01,2012-03-12 08:01,CS_MSO,PT_Normal,,,,,CGk11XZZk0WB9TfSkZZ2hQ,,,,N,0,0,,,2012-06-18 09:56,2012-06-20 10:08,admin,admin
900,145623,5115,22981,794,0,0,N,N,N,CP_Drtn,TT_FinMile,DT_FixedDrtn,RV_OK,TK_NotStart,ENT01,Issue Approved P&ID's / Equipment List IFC DWG's,,0,3584,0,0,0,0,0,0,0,0,2012-01-15 16:00,,,2012-01-15 16:00,2012-01-15 16:00,,2012-01-15 16:00,2012-01-15 16:00,2012-01-15 16:00,2012-01-15 16:00,2012-01-15 16:00,2012-01-15 16:00,,2012-01-15 16:00,2012-01-15 16:00,CS_MEO,PT_Normal,,,,,qAveogVQ/Eqk6PxYMhlt+Q,,,,N,0,0,,,2012-06-18 09:56,2012-06-18 09:56,admin,admin
901,145624,5115,22981,794,0,0,N,N,N,CP_Drtn,TT_FinMile,DT_FixedDrtn,RV_OK,TK_NotStart,ENT02,Issue plat plans IFC DWG's,,0,3408,0,0,0,0,0,0,0,0,2012-02-06 16:00,,,2012-02-06 16:00,2012-02-06 16:00,,2012-02-06 16:00,2012-02-06 16:00,2012-02-06 16:00,2012-02-06 16:00,2012-02-06 16:00,2012-02-06 16:00,,2012-02-06 16:00,2012-02-06 16:00,CS_MEO,PT_Normal,,,,,JCcq0hzFjkmwLBgQwNeCQg,,,,N,0,0,,,2012-06-18 09:56,2012-06-18 09:56,admin,admin
902,145625,5115,22981,5686,0,0,N,N,N,CP_Drtn,TT_FinMile,DT_FixedDrtn,RV_OK,TK_NotStart,ENT04,Issue Hydrotest maps & loops IFC DWG's,,0,2648,0,0,0,0,0,0,0,0,2012-02-28 16:00,,,2012-02-28 16:00,2012-02-28 16:00,,2012-02-28 16:00,2012-02-28 16:00,2012-02-28 16:00,2012-02-28 16:00,2012-02-28 16:00,2012-02-28 16:00,,2012-02-28 16:00,2012-02-28 16:00,CS_MEO,PT_Normal,,,,,ZSLxlugjgE+fcrB44v/5ug,,,,N,0,0,,,2012-06-18 09:56,2012-06-18 09:56,admin,admin
903,145626,5115,22982,794,1,0,N,N,N,CP_Drtn,TT_Task,DT_FixedDUR2,RV_OK,TK_NotStart,ENE01,Receiving E&I IFC DWG`s,,0,2279.983333,776,0,0,0,776,0,0,0,2012-01-23 08:01,,,2012-01-23 08:01,2012-04-29 08:01,,2012-01-23 08:01,2012-04-29 08:01,2012-01-23 08:01,2012-04-29 08:01,2012-01-23 08:01,2012-04-29 08:01,,2012-01-23 08:01,2012-04-29 08:01,CS_MSO,PT_Normal,,,,,hti+MSQuH0WcDSyMTWZSDg,,,,N,0,0,,,2012-06-18 09:56,2012-06-20 10:08,admin,admin
904,145627,5115,22977,5686,1,0,N,N,N,CP_Drtn,TT_Task,DT_FixedDUR2,RV_OK,TK_NotStart,PF01,Pre-Fabrication of Steel Structure ( Jacket & Piles),,208,0,960,0,0,0,960,0,0,0,,,,2012-07-14 08:00,2012-12-10 16:00,,2012-06-13 08:00,2012-11-08 16:00,2012-06-13 08:00,2012-11-08 16:00,2012-06-13 08:00,2012-11-08 16:00,,2012-07-14 08:00,2012-12-10 16:00,,PT_Normal,,,,,W9AtOhtms0m0XOSuqQyeBg,,,,N,0,0,,,2012-06-18 09:56,2012-06-20 10:08,admin,admin
905,145628,5115,22995,794,1,0,N,N,N,CP_Drtn,TT_Task,DT_FixedDUR2,RV_OK,TK_NotStart,PRT01,Piping Bulk material 1st batch,,-0.016667,536,240,0,0,0,240,0,0,0,2012-05-07 17:00,,,2012-05-07 16:59,2012-06-06 16:59,,2012-05-08 08:00,2012-06-06 17:00,2012-05-08 08:00,2012-06-06 17:00,2012-05-08 08:00,2012-06-06 17:00,,2012-05-07 16:59,2012-06-06 16:59,CS_MSO,PT_Normal,,,,,WTfq1fY8DUqjcLFazWMRFg,yl9WvSBhsUKXjamnJ9tBwA,,,N,0,0,,,2012-06-18 09:56,2012-06-20 10:08,admin,admin
906,145629,5115,22995,794,1,0,N,N,N,CP_Drtn,TT_Task,DT_FixedDUR2,RV_OK,TK_NotStart,PRT02,Piping Bulk material 2nd batch,,-0.016667,855,240,0,0,0,240,0,0,0,2012-06-10 17:00,,,2012-06-10 16:59,2012-07-10 16:59,,2012-06-11 08:00,2012-07-10 17:00,2012-06-11 08:00,2012-07-10 17:00,2012-06-11 08:00,2012-07-10 17:00,,2012-06-10 16:59,2012-07-10 16:59,CS_MSO,PT_Normal,,,,,LM3gN7hhG0qY3Hph0KohBw,hlpmj5RDM0ug86CkeyGt7w,,,N,0,0,,,2012-06-18 09:56,2012-06-20 10:08,admin,admin
907,145630,5115,22995,794,1,0,N,N,N,CP_Drtn,TT_Task,DT_FixedDUR2,RV_OK,TK_NotStart,PRT03,Piping Valves Bulk material 1st batch,,-0.016667,999,112,0,0,0,112,0,0,0,2012-06-23 17:00,,,2012-06-23 16:59,2012-07-07 16:59,,2012-06-24 08:00,2012-07-07 17:00,2012-06-24 08:00,2012-07-07 17:00,2012-06-24 08:00,2012-07-07 17:00,,2012-06-23 16:59,2012-07-07 16:59,CS_MSO,PT_Normal,,,,,kuIEMPbXkUWKGriWhhljnQ,GizpIK9AB0igoR6gZc1u/Q,,,N,0,0,,,2012-06-18 09:56,2012-06-20 10:08,admin,admin
908,145631,5115,22995,794,1,0,N,N,N,CP_Drtn,TT_Task,DT_FixedDUR2,RV_OK,TK_NotStart,PRT04,Piping valves Bulk material 2nd batch,,-0.016667,767,112,0,0,0,112,0,0,0,2012-07-22 17:00,,,2012-07-22 16:59,2012-08-05 16:59,,2012-07-23 08:00,2012-08-05 17:00,2012-07-23 08:00,2012-08-05 17:00,2012-07-23 08:00,2012-08-05 17:00,,2012-07-22 16:59,2012-08-05 16:59,CS_MSO,PT_Normal,,,,,0igUh7H9Qk2OeqFlqNg2eg,UK1YuP2nDUesL7urCII2Dw,,,N,0,0,,,2012-06-18 09:56,2012-06-20 10:08,admin,admin
909,145632,5115,22995,794,1,0,N,N,N,CP_Drtn,TT_Task,DT_FixedDUR2,RV_OK,TK_NotStart,PRT05,Flanges,,-0.016667,8,360,0,0,0,360,0,0,0,2012-07-13 17:00,,,2012-07-13 16:59,2012-08-27 16:59,,2012-07-14 08:00,2012-08-27 17:00,2012-07-14 08:00,2012-08-27 17:00,2012-07-14 08:00,2012-08-27 17:00,,2012-07-13 16:59,2012-08-27 16:59,CS_MSO,PT_Normal,,,,,raf7Um/MlkWmbRrU6ZFzFg,Ex31o9Pan0OuXqbrZEGEag,,,N,0,0,,,2012-06-18 09:56,2012-06-20 10:08,admin,admin
910,145633,5115,22995,794,1,0,N,N,N,CP_Drtn,TT_Task,DT_FixedDUR2,RV_OK,TK_NotStart,PRT06,Pressure Safety Valve,,-0.016667,1519,352,0,0,0,352,0,0,0,2012-06-04 17:00,,,2012-06-04 16:59,2012-07-18 16:59,,2012-06-05 08:00,2012-07-18 17:00,2012-06-05 08:00,2012-07-18 17:00,2012-06-05 08:00,2012-07-18 17:00,,2012-06-04 16:59,2012-07-18 16:59,CS_MSO,PT_Normal,,,,,fNFNfUxeCUGgigPayBZlFQ,F7qZYQ2pcEuIGt99a45cYg,,,N,0,0,,,2012-06-18 09:56,2012-06-20 10:08,admin,admin
911,145634,5115,22995,794,1,0,N,N,N,CP_Drtn,TT_Task,DT_FixedDUR2,RV_OK,TK_NotStart,PRT07,Pressure regulator Valve,,-0.016667,1231,240,0,0,0,240,0,0,0,2012-07-24 17:00,,,2012-07-24 16:59,2012-08-23 16:59,,2012-07-25 08:00,2012-08-23 17:00,2012-07-25 08:00,2012-08-23 17:00,2012-07-25 08:00,2012-08-23 17:00,,2012-07-24 16:59,2012-08-23 16:59,CS_MSO,PT_Normal,,,,,f3brroeM+UW49lqbjHX3dA,j+Gn0C3OAUWl0C1SspHgPw,,,N,0,0,,,2012-06-18 09:56,2012-06-20 10:08,admin,admin
912,145635,5115,22995,794,1,0,N,N,N,CP_Drtn,TT_Task,DT_FixedDUR2,RV_OK,TK_NotStart,PRT08,Shutdown Valve,,-0.016667,1135,248,0,0,0,248,0,0,0,2012-08-04 17:00,,,2012-08-04 16:59,2012-09-04 16:59,,2012-08-05 08:00,2012-09-04 17:00,2012-08-05 08:00,2012-09-04 17:00,2012-08-05 08:00,2012-09-04 17:00,,2012-08-04 16:59,2012-09-04 16:59,CS_MSO,PT_Normal,,,,,RSjcF1Wo+EyJTadpaXElQw,teAPEnX+OEanjGoc9mUlTg,,,N,0,0,,,2012-06-18 09:56,2012-06-20 10:08,admin,admin
913,145636,5115,22984,794,1,0,N,N,N,CP_Drtn,TT_Task,DT_FixedDUR2,RV_OK,TK_NotStart,PRT09,Chemical Injection PKG.,,-0.016667,1264,360,0,0,0,360,0,0,0,2012-05-08 17:00,,,2012-05-08 16:59,2012-06-22 16:59,,2012-05-09 08:00,2012-06-22 17:00,2012-05-09 08:00,2012-06-22 17:00,2012-05-09 08:00,2012-06-22 17:00,,2012-05-08 16:59,2012-06-22 16:59,CS_MSO,PT_Normal,,,,,RaUFZf4LJUuGVSbl7BGlsg,yl9WvSBhsUKXjamnJ9tBwA,,,N,0,0,,,2012-06-18 09:56,2012-06-20 10:08,admin,admin
914,145637,5115,22984,794,1,0,N,N,N,CP_Drtn,TT_Task,DT_FixedDUR2,RV_OK,TK_NotStart,PRT10,Launcher recivier,,-0.016667,960,360,0,0,0,360,0,0,0,2012-06-15 17:00,,,2012-06-15 16:59,2012-07-30 16:59,,2012-06-16 08:00,2012-07-30 17:00,2012-06-16 08:00,2012-07-30 17:00,2012-06-16 08:00,2012-07-30 17:00,,2012-06-15 16:59,2012-07-30 16:59,CS_MSO,PT_Normal,,,,,BFwRMe+At0a4/k2tGzFPYQ,hlpmj5RDM0ug86CkeyGt7w,,,N,0,0,,,2012-06-18 09:56,2012-06-20 10:08,admin,admin
915,145638,5115,22984,794,1,0,N,N,N,CP_Drtn,TT_Task,DT_FixedDUR2,RV_OK,TK_NotStart,PRT11,Vent KOD,,-0.016667,864,360,0,0,0,360,0,0,0,2012-06-27 17:00,,,2012-06-27 16:59,2012-08-11 16:59,,2012-06-28 08:00,2012-08-11 17:00,2012-06-28 08:00,2012-08-11 17:00,2012-06-28 08:00,2012-08-11 17:00,,2012-06-27 16:59,2012-08-11 16:59,CS_MSO,PT_Normal,,,,,C8AMvEEr80K6mJOFPki0uQ,GizpIK9AB0igoR6gZc1u/Q,,,N,0,0,,,2012-06-18 09:56,2012-06-20 10:08,admin,admin
916,145639,5115,22984,794,1,0,N,N,N,CP_Drtn,TT_Task,DT_FixedDUR2,RV_OK,TK_NotStart,PRT12,Open Drain Tank,,-0.016667,624,360,0,0,0,360,0,0,0,2012-06-27 17:00,,,2012-06-27 16:59,2012-08-11 16:59,,2012-06-28 08:00,2012-08-11 17:00,2012-06-28 08:00,2012-08-11 17:00,2012-06-28 08:00,2012-08-11 17:00,,2012-06-27 16:59,2012-08-11 16:59,CS_MSO,PT_Normal,,,,,DYpwr6tdWUWhF0QoXHagYg,UK1YuP2nDUesL7urCII2Dw,,,N,0,0,,,2012-06-18 09:56,2012-06-20 10:08,admin,admin
917,145640,5115,22985,794,1,0,N,N,N,CP_Drtn,TT_Task,DT_FixedDUR2,RV_OK,TK_NotStart,PRS03,Delivery of Structure Material (F.O.B - 13 Wks.) - (Gupco Responsability),,0,0,728,0,0,0,728,0,0,0,,,,2012-02-15 08:00,2012-05-15 17:00,,2012-02-15 08:00,2012-05-15 17:00,2012-02-15 08:00,2012-05-15 17:00,2012-02-15 08:00,2012-05-15 17:00,,2012-02-15 08:00,2012-05-15 17:00,,PT_Normal,,,,,LjeksxdE1Em1JUxzYZDtGA,698/E0SRuUS4pAlggO6l9g,,,Y,0,0,,,2012-06-18 09:56,2012-06-20 10:09,admin,admin
918,145641,5115,22985,794,1,0,N,N,N,CP_Drtn,TT_Task,DT_FixedDUR2,RV_OK,TK_NotStart,PRS05,Material check with IFC DWG's to Prepare balance material,,1566.983333,0,56,0,0,0,56,0,0,0,,,,2012-10-28 16:00,2012-11-04 16:00,,2012-04-16 08:01,2012-04-23 08:01,2012-04-16 08:01,2012-04-23 08:01,2012-04-16 08:01,2012-04-23 08:01,,2012-10-28 16:00,2012-11-04 16:00,,PT_Normal,,,,,VHHSBWTEl0OE1CwxPceMdA,,,,N,0,0,,,2012-06-18 09:56,2012-06-20 10:08,admin,admin
919,145642,5115,22985,794,1,0,N,N,N,CP_Drtn,TT_Task,DT_FixedDUR2,RV_OK,TK_NotStart,PRS06,Delivery of balance material,,1566.983333,1566.983333,1232,0,0,0,1232,0,0,0,,,,2012-11-04 16:00,2013-04-07 16:00,,2012-04-23 08:01,2012-09-24 08:01,2012-04-23 08:01,2012-09-24 08:01,2012-04-23 08:01,2012-09-24 08:01,,2012-11-04 16:00,2013-04-07 16:00,,PT_Normal,,,,,Te7+0IfC/0uVIKYMIMISVg,,,,N,0,0,,,2012-06-18 09:56,2012-06-20 10:08,admin,admin
920,145643,5115,22985,794,0,0,N,N,N,CP_Drtn,TT_Mile,DT_FixedDrtn,RV_OK,TK_NotStart,PRS01,Issue Structural Material P.O's ( Gupco Responsability),,0,64,0,0,0,0,0,0,0,0,2012-02-07 08:00,,,2012-02-07 08:00,2012-02-07 08:00,,2012-02-07 08:00,2012-02-07 08:00,2012-02-07 08:00,2012-02-07 08:00,2012-02-07 08:00,2012-02-07 08:00,,2012-02-07 08:00,2012-02-07 08:00,CS_MSO,PT_Normal,,,,,KDop3BlkHUu2DpwtZ9oTfQ,,,,N,0,0,,,2012-06-18 09:56,2012-06-18 09:56,admin,admin
921,145644,5115,22985,794,0,0,N,N,N,CP_Drtn,TT_Mile,DT_FixedDrtn,RV_OK,TK_NotStart,PRS02,Issue LC ( Gupco Responsability),,0,0,0,0,0,0,0,0,0,0,2012-02-15 08:00,,,2012-02-15 08:00,2012-02-15 08:00,,2012-02-15 08:00,2012-02-15 08:00,2012-02-15 08:00,2012-02-15 08:00,2012-02-15 08:00,2012-02-15 08:00,,2012-02-15 08:00,2012-02-15 08:00,CS_MSO,PT_Normal,,,,,qCO+FWrYGUCC4fM1S1d/BA,,,,Y,0,0,,,2012-06-18 09:56,2012-06-20 10:09,admin,admin
922,145645,5115,22985,794,1,0,N,N,N,CP_Drtn,TT_Task,DT_FixedDUR2,RV_OK,TK_NotStart,PRS04,Delivery of Structure Material at Site (4 Wks.),,0,0,224,0,0,0,224,0,0,0,,,,2012-05-16 08:00,2012-06-12 17:00,,2012-05-16 08:00,2012-06-12 17:00,2012-05-16 08:00,2012-06-12 17:00,2012-05-16 08:00,2012-06-12 17:00,,2012-05-16 08:00,2012-06-12 17:00,,PT_Normal,,,,,MxKGzQ2kx0+Evz1nZ2lfUQ,,,,Y,0,0,,,2012-06-18 09:56,2012-06-20 10:09,admin,admin
923,145646,5115,22986,794,1,0,N,N,N,CP_Drtn,TT_Task,DT_FixedDrtn,RV_OK,TK_NotStart,PRP01,"Pipeline 18"""" & Fittings",,0,0,408,0,0,0,408,0,0,0,2012-05-31 08:00,,,2012-05-31 08:00,2012-07-20 17:00,,2012-05-31 08:00,2012-07-20 17:00,2012-05-31 08:00,2012-07-20 17:00,2012-05-31 08:00,2012-07-20 17:00,,2012-05-31 08:00,2012-07-20 17:00,CS_MSO,PT_Normal,,,,,KYejLqY/nkK6DWRLrxOvfw,,,,N,0,0,,,2012-06-18 09:56,2012-06-18 09:56,admin,admin
924,145647,5115,22986,794,1,0,N,N,N,CP_Drtn,TT_Task,DT_FixedDrtn,RV_OK,TK_NotStart,PRP02,"Pipeline 8"""" & Fittings",,-0.016667,351,408,0,0,0,408,0,0,0,2012-05-30 17:00,,,2012-05-30 16:59,2012-07-20 16:59,,2012-05-31 08:00,2012-07-20 17:00,2012-05-31 08:00,2012-07-20 17:00,2012-05-31 08:00,2012-07-20 17:00,,2012-05-30 16:59,2012-07-20 16:59,CS_MSO,PT_Normal,,,,,okj2izuWl0eD7eG4YZzccA,yl9WvSBhsUKXjamnJ9tBwA,,,N,0,0,,,2012-06-18 09:56,2012-06-20 10:08,admin,admin
925,145648,5115,23010,794,1,0,N,N,N,CP_Drtn,TT_Task,DT_FixedDUR2,RV_OK,TK_NotStart,PRE07,Radar system,,-0.016667,904,240,0,0,0,240,0,0,0,2012-06-19 17:00,,,2012-06-19 16:59,2012-07-19 16:59,,2012-06-20 08:00,2012-07-19 17:00,2012-06-20 08:00,2012-07-19 17:00,2012-06-20 08:00,2012-07-19 17:00,,2012-06-19 16:59,2012-07-19 16:59,CS_MSO,PT_Normal,,,,,MZU1LctdLkKUjEK27HzDiA,hR+VpIi9/EScdnqRSGSfwg,,,N,0,0,,,2012-06-18 09:56,2012-06-20 10:08,admin,admin
926,145649,5115,23010,794,1,0,N,N,N,CP_Drtn,TT_Task,DT_FixedDUR2,RV_OK,TK_NotStart,PRE08,Navegation Aids,,-0.016667,1384,360,0,0,0,360,0,0,0,2012-04-05 17:00,,,2012-04-05 16:59,2012-05-20 16:59,,2012-04-06 08:00,2012-05-20 17:00,2012-04-06 08:00,2012-05-20 17:00,2012-04-06 08:00,2012-05-20 17:00,,2012-04-05 16:59,2012-05-20 16:59,CS_MSO,PT_Normal,,,,,keIgvcu2a0Gwqs/8mUTm+w,BsriHSUEkEGgiUy2IxXEwg,,,N,0,0,,,2012-06-18 09:56,2012-06-20 10:08,admin,admin
927,145650,5115,23006,794,1,0,N,N,N,CP_Drtn,TT_Task,DT_FixedDUR2,RV_OK,TK_NotStart,PRE01,Electrical Bulks,,-0.016667,512,360,0,0,0,360,0,0,0,2012-07-23 17:00,,,2012-07-23 16:59,2012-09-06 16:59,,2012-07-24 08:00,2012-09-06 17:00,2012-07-24 08:00,2012-09-06 17:00,2012-07-24 08:00,2012-09-06 17:00,,2012-07-23 16:59,2012-09-06 16:59,CS_MSO,PT_Normal,,,,,6pQwfJNNWUiNRakUaXaMMw,,,,N,0,0,,,2012-06-18 09:56,2012-06-20 10:08,admin,admin
928,145651,5115,23006,794,1,0,N,N,N,CP_Drtn,TT_Task,DT_FixedDUR2,RV_OK,TK_NotStart,PRE02,Cathodic Protection,,-0.016667,1000,360,0,0,0,360,0,0,0,2012-05-23 17:00,,,2012-05-23 16:59,2012-07-07 16:59,,2012-05-24 08:00,2012-07-07 17:00,2012-05-24 08:00,2012-07-07 17:00,2012-05-24 08:00,2012-07-07 17:00,,2012-05-23 16:59,2012-07-07 16:59,CS_MSO,PT_Normal,,,,,1QHhpQqdikGDDzNg+uil2Q,,,,N,0,0,,,2012-06-18 09:56,2012-06-20 10:08,admin,admin
929,145652,5115,23006,794,1,0,N,N,N,CP_Drtn,TT_Task,DT_FixedDUR2,RV_OK,TK_NotStart,PRE03,Solar Power,,-0.016667,912,360,0,0,0,360,0,0,0,2012-06-03 17:00,,,2012-06-03 16:59,2012-07-18 16:59,,2012-06-04 08:00,2012-07-18 17:00,2012-06-04 08:00,2012-07-18 17:00,2012-06-04 08:00,2012-07-18 17:00,,2012-06-03 16:59,2012-07-18 16:59,CS_MSO,PT_Normal,,,,,sYKmlNcUF0eODtC/8nY8fw,,,,N,0,0,,,2012-06-18 09:56,2012-06-20 10:08,admin,admin
930,145653,5115,23007,794,1,0,N,N,N,CP_Drtn,TT_Task,DT_FixedDUR2,RV_OK,TK_NotStart,PRE04,F&G Detector,,-0.016667,648,360,0,0,0,360,0,0,0,2012-07-06 17:00,,,2012-07-06 16:59,2012-08-20 16:59,,2012-07-07 08:00,2012-08-20 17:00,2012-07-07 08:00,2012-08-20 17:00,2012-07-07 08:00,2012-08-20 17:00,,2012-07-06 16:59,2012-08-20 16:59,CS_MSO,PT_Normal,,,,,SxAjU4LAvEaDghKn6Vzf/w,hR+VpIi9/EScdnqRSGSfwg,,,N,0,0,,,2012-06-18 09:56,2012-06-20 10:08,admin,admin
931,145654,5115,23007,794,1,0,N,N,N,CP_Drtn,TT_Task,DT_FixedDUR2,RV_OK,TK_NotStart,PRE05,Fire fighting system,,-0.016667,720,360,0,0,0,360,0,0,0,2012-06-27 17:00,,,2012-06-27 16:59,2012-08-11 16:59,,2012-06-28 08:00,2012-08-11 17:00,2012-06-28 08:00,2012-08-11 17:00,2012-06-28 08:00,2012-08-11 17:00,,2012-06-27 16:59,2012-08-11 16:59,CS_MSO,PT_Normal,,,,,0d0VWsHkNECBpP82rZ4IjA,BsriHSUEkEGgiUy2IxXEwg,,,N,0,0,,,2012-06-18 09:56,2012-06-20 10:08,admin,admin
932,145655,5115,23007,794,1,0,N,N,N,CP_Drtn,TT_Task,DT_FixedDUR2,RV_OK,TK_NotStart,PRE06,Life Saving Equipment,,-0.016667,664,360,0,0,0,360,0,0,0,2012-07-04 17:00,,,2012-07-04 16:59,2012-08-18 16:59,,2012-07-05 08:00,2012-08-18 17:00,2012-07-05 08:00,2012-08-18 17:00,2012-07-05 08:00,2012-08-18 17:00,,2012-07-04 16:59,2012-08-18 16:59,CS_MSO,PT_Normal,,,,,v+D/0RVY+k+qWt+kOH3b6A,BMPt6NUgQkm3eBH1L9b0qA,,,N,0,0,,,2012-06-18 09:56,2012-06-20 10:08,admin,admin
933,145656,5115,23008,794,1,0,N,N,N,CP_Drtn,TT_Task,DT_FixedDUR2,RV_OK,TK_NotStart,PRE09,Instrument Electical Bulk,,-0.016667,624,240,0,0,0,240,0,0,0,2012-07-24 17:00,,,2012-07-24 16:59,2012-08-23 16:59,,2012-07-25 08:00,2012-08-23 17:00,2012-07-25 08:00,2012-08-23 17:00,2012-07-25 08:00,2012-08-23 17:00,,2012-07-24 16:59,2012-08-23 16:59,CS_MSO,PT_Normal,,,,,Nj4nfaVpL0a7yATpo7IJUQ,hR+VpIi9/EScdnqRSGSfwg,,,N,0,0,,,2012-06-18 09:56,2012-06-20 10:08,admin,admin
934,145657,5115,23008,794,1,0,N,N,N,CP_Drtn,TT_Task,DT_FixedDUR2,RV_OK,TK_NotStart,PRE10,Instrument Mechanical Bulk,,-0.016667,640,280,0,0,0,280,0,0,0,2012-07-17 17:00,,,2012-07-17 16:59,2012-08-21 16:59,,2012-07-18 08:00,2012-08-21 17:00,2012-07-18 08:00,2012-08-21 17:00,2012-07-18 08:00,2012-08-21 17:00,,2012-07-17 16:59,2012-08-21 16:59,CS_MSO,PT_Normal,,,,,1WYArUmiy0CIqLpyDL2Aqw,BsriHSUEkEGgiUy2IxXEwg,,,N,0,0,,,2012-06-18 09:56,2012-06-20 10:08,admin,admin
935,145658,5115,23008,794,1,0,N,N,N,CP_Drtn,TT_Task,DT_FixedDUR2,RV_OK,TK_NotStart,PRE11,Field Instrument,,-0.016667,760,360,0,0,0,360,0,0,0,2012-06-22 17:00,,,2012-06-22 16:59,2012-08-06 16:59,,2012-06-23 08:00,2012-08-06 17:00,2012-06-23 08:00,2012-08-06 17:00,2012-06-23 08:00,2012-08-06 17:00,,2012-06-22 16:59,2012-08-06 16:59,CS_MSO,PT_Normal,,,,,PDgbh7K2YkWmZatsY3J3EQ,BMPt6NUgQkm3eBH1L9b0qA,,,N,0,0,,,2012-06-18 09:56,2012-06-20 10:08,admin,admin
936,145659,5115,23008,794,1,0,N,N,N,CP_Drtn,TT_Task,DT_FixedDUR2,RV_OK,TK_NotStart,PRE12,multi phase flow meter,,-0.016667,1095,456,0,0,0,456,0,0,0,2012-07-17 17:00,,,2012-07-17 16:59,2012-09-12 16:59,,2012-07-18 08:00,2012-09-12 17:00,2012-07-18 08:00,2012-09-12 17:00,2012-07-18 08:00,2012-09-12 17:00,,2012-07-17 16:59,2012-09-12 16:59,CS_MSO,PT_Normal,,,,,vyKFUQNBYUyD98Zcw61HYA,Mkb86m2/TUuHJY33o39Fuw,,,N,0,0,,,2012-06-18 09:56,2012-06-20 10:08,admin,admin
937,145660,5115,23008,794,1,0,N,N,N,CP_Drtn,TT_Task,DT_FixedDUR2,RV_OK,TK_NotStart,PRE13,Safe Guard system,,-0.016667,1063,240,0,0,0,240,0,0,0,2012-08-17 17:00,,,2012-08-17 16:59,2012-09-16 16:59,,2012-08-18 08:00,2012-09-16 17:00,2012-08-18 08:00,2012-09-16 17:00,2012-08-18 08:00,2012-09-16 17:00,,2012-08-17 16:59,2012-09-16 16:59,CS_MSO,PT_Normal,,,,,QeJKxmMyZEikaTGO/tG6ZA,,,,N,0,0,,,2012-06-18 09:56,2012-06-20 10:08,admin,admin
938,145661,5115,22991,5686,1,0,N,N,N,CP_Drtn,TT_Task,DT_FixedDUR2,RV_OK,TK_NotStart,JK01,"Jacket , Boat Landing Fabrication & Painting",,208,0,1400,0,0,0,1400,0,0,0,,,,2012-07-22 08:00,2013-02-24 16:00,,2012-06-21 08:00,2013-01-22 16:00,2012-06-21 08:00,2013-01-22 16:00,2012-06-21 08:00,2013-01-22 16:00,,2012-07-22 08:00,2013-02-24 16:00,,PT_Normal,,,,,u4ynSxfGNEaBrnaMqcm75w,,,,N,0,0,,,2012-06-18 09:56,2012-06-20 10:08,admin,admin
939,145662,5115,22991,5686,1,0,N,N,N,CP_Drtn,TT_Task,DT_FixedDUR2,RV_OK,TK_NotStart,JK02,Piles Fabrication & Marking,,592,592,1000,0,0,0,1000,0,0,0,,,,2012-11-08 08:00,2013-04-07 16:00,,2012-08-06 08:00,2013-01-08 16:00,2012-08-06 08:00,2013-01-08 16:00,2012-08-06 08:00,2013-01-08 16:00,,2012-11-08 08:00,2013-04-07 16:00,,PT_Normal,,,,,sEU4rn3/7kOkAyc+3hFVWg,,,,N,0,0,,,2012-06-18 09:56,2012-06-18 09:56,admin,admin
940,145663,5115,23001,5686,1,0,N,N,N,CP_Drtn,TT_Task,DT_FixedDUR2,RV_OK,TK_NotStart,DS001,Fabrication and Painting of Below Production Deck/Legs,,0,0,840,0,0,0,840,0,0,0,,,,2012-06-13 08:00,2012-10-18 16:00,,2012-06-13 08:00,2012-10-18 16:00,2012-06-13 08:00,2012-10-18 16:00,2012-06-13 08:00,2012-10-18 16:00,,2012-06-13 08:00,2012-10-18 16:00,,PT_Normal,,,,,XHBMKPd1F0+n4fKU2+F1wg,,,,Y,0,0,,,2012-06-18 09:56,2012-06-20 10:09,admin,admin
941,145664,5115,23001,5686,1,0,N,N,N,CP_Drtn,TT_Task,DT_FixedDUR2,RV_OK,TK_NotStart,DS002,Fabrication and Painting of Production Deck,,0,0,960,0,0,0,960,0,0,0,,,,2012-06-13 08:00,2012-11-08 16:00,,2012-06-13 08:00,2012-11-08 16:00,2012-06-13 08:00,2012-11-08 16:00,2012-06-13 08:00,2012-11-08 16:00,,2012-06-13 08:00,2012-11-08 16:00,,PT_Normal,,,,,QlgW06k/hk+InTdOJtT3Kw,b7vZh9Ccpk+EXT4kXe5yzg,,,Y,0,0,,,2012-06-18 09:56,2012-06-20 10:09,admin,admin
942,145665,5115,23001,5686,1,0,N,N,N,CP_Drtn,TT_Task,DT_FixedDUR2,RV_OK,TK_NotStart,DS003,Fabrication and Paint of Heli-Deck ( & Lifting if Required),,400,0,960,0,0,0,960,0,0,0,,,,2012-10-29 08:00,2013-03-21 16:00,,2012-08-27 08:00,2013-01-20 16:00,2012-08-27 08:00,2013-01-20 16:00,2012-08-27 08:00,2013-01-20 16:00,,2012-10-29 08:00,2013-03-21 16:00,,PT_Normal,,,,,9IGjQlB1ok6BaIbTm8MDAw,JC1t+n1vH0eDZIP7mK52AA,,,N,0,0,,,2012-06-18 09:56,2012-06-18 09:56,admin,admin
943,145666,5115,23001,5686,1,0,N,N,N,CP_Drtn,TT_Task,DT_FixedDUR2,RV_OK,TK_NotStart,DS004,Lifting Below Production Deck on High Cups,,24,0,40,0,0,0,40,0,0,0,,,,2012-10-23 08:00,2012-10-31 16:00,,2012-10-20 08:00,2012-10-24 16:00,2012-10-20 08:00,2012-10-24 16:00,2012-10-20 08:00,2012-10-24 16:00,,2012-10-23 08:00,2012-10-31 16:00,,PT_Normal,,,,,PA7ByjUx7E21DYq/kXlFIQ,,,,N,0,0,,,2012-06-18 09:56,2012-06-18 09:56,admin,admin
944,145667,5115,23001,5686,1,0,N,N,N,CP_Drtn,TT_Task,DT_FixedDUR2,RV_OK,TK_NotStart,DS005,Lifting Production Deck on Below Production Level,,0,0,120,0,0,0,120,0,0,0,,,,2012-11-10 08:00,2012-11-27 16:00,,2012-11-10 08:00,2012-11-27 16:00,2012-11-10 08:00,2012-11-27 16:00,2012-11-10 08:00,2012-11-27 16:00,,2012-11-10 08:00,2012-11-27 16:00,,PT_Normal,,,,,MjdaAH/aTUeXt3oKmsVX2Q,,,,Y,0,0,,,2012-06-18 09:56,2012-06-20 10:09,admin,admin
945,145668,5115,23001,5686,1,0,N,N,N,CP_Drtn,TT_Task,DT_FixedDUR2,RV_OK,TK_NotStart,DS006,Fabrication & Installation of Deck Str. Miscellence / Padeyes,,80,24,960,0,0,0,960,0,0,0,,,,2012-10-17 08:00,2013-03-13 16:00,,2012-10-04 08:00,2013-03-02 16:00,2012-10-04 08:00,2013-03-02 16:00,2012-10-04 08:00,2013-03-02 16:00,,2012-10-17 08:00,2013-03-13 16:00,,PT_Normal,,,,,hlOlymwSvU2/wwk1xADx9w,,,,N,0,0,,,2012-06-18 09:56,2012-06-18 09:56,admin,admin
946,145669,5115,23001,5686,0,0,N,N,N,CP_Drtn,TT_FinMile,DT_FixedDrtn,RV_OK,TK_NotStart,DS007,Physical Weighting,,80,0,0,0,0,0,0,0,0,0,,,,2013-03-06 16:00,2013-03-06 16:00,,2013-02-23 16:00,2013-02-23 16:00,2013-02-23 16:00,2013-02-23 16:00,2013-02-23 16:00,2013-02-23 16:00,,2013-03-06 16:00,2013-03-06 16:00,,PT_Normal,,,,,PMkF/LK8IE61L6+ldvSvGQ,,,,N,0,0,,,2012-06-18 09:56,2012-06-18 09:56,admin,admin
947,145670,5115,23001,5686,1,0,N,N,N,CP_Drtn,TT_Task,DT_FixedDUR2,RV_OK,TK_NotStart,DS008,Clearanse of structure (Fab. & Painting ) Punch List,,56,56,168,0,0,0,168,0,0,0,,,,2013-03-14 08:00,2013-04-07 16:00,,2013-03-06 08:00,2013-03-30 16:00,2013-03-06 08:00,2013-03-30 16:00,2013-03-06 08:00,2013-03-30 16:00,,2013-03-14 08:00,2013-04-07 16:00,,PT_Normal,,,,,DbIOrzB/X02xctWtUxlLYw,,,,N,0,0,,,2012-06-18 09:56,2012-06-18 09:56,admin,admin
948,145671,5115,23024,5686,1,0,N,N,N,CP_Drtn,TT_Task,DT_FixedDUR2,RV_OK,TK_NotStart,TFS001,Piping and Piping Supports Fabrication and Painting,,320,320,800,0,0,0,800,0,0,0,,,,2012-09-10 08:00,2013-01-10 16:00,,2012-07-21 08:00,2012-11-24 16:00,2012-07-21 08:00,2012-11-24 16:00,2012-07-21 08:00,2012-11-24 16:00,,2012-09-10 08:00,2013-01-10 16:00,,PT_Normal,,,,,EHylcBLxxkOhxi9c0o3xog,,,,N,0,0,,,2012-06-18 09:56,2012-06-18 09:56,admin,admin
949,145672,5115,23024,5686,1,0,N,N,N,CP_Drtn,TT_Task,DT_FixedDUR2,RV_OK,TK_NotStart,TSF002,Piping and Piping Supports Erection,,0,0,600,0,0,0,600,0,0,0,,,,2012-11-25 08:00,2013-02-23 16:00,,2012-11-25 08:00,2013-02-23 16:00,2012-11-25 08:00,2013-02-23 16:00,2012-11-25 08:00,2013-02-23 16:00,,2012-11-25 08:00,2013-02-23 16:00,,PT_Normal,,,,,qd+bm0EYnEmGO31gZTkAlg,,,,Y,0,0,,,2012-06-18 09:56,2012-06-20 10:09,admin,admin
950,145673,5115,23021,5686,1,0,N,N,N,CP_Drtn,TT_Task,DT_FixedDUR2,RV_OK,TK_NotStart,TSF003,Equipment Erection on Below Production Level,,24,24,56,0,0,0,56,0,0,0,,,,2012-11-01 08:00,2012-11-08 16:00,,2012-10-29 08:00,2012-11-05 16:00,2012-10-29 08:00,2012-11-05 16:00,2012-10-29 08:00,2012-11-05 16:00,,2012-11-01 08:00,2012-11-08 16:00,,PT_Normal,,,,,ZhIZKygWaUKHzw4xGC4eeA,,,,N,0,0,,,2012-06-18 09:56,2012-06-18 09:56,admin,admin
951,145674,5115,23021,5686,1,0,N,N,N,CP_Drtn,TT_Task,DT_FixedDUR2,RV_OK,TK_NotStart,TSF004,Equipment Erection on Production Level,,216,216,120,0,0,0,120,0,0,0,,,,2012-12-30 08:00,2013-01-16 16:00,,2012-11-28 08:00,2012-12-15 16:00,2012-11-28 08:00,2012-12-15 16:00,2012-11-28 08:00,2012-12-15 16:00,,2012-12-30 08:00,2013-01-16 16:00,,PT_Normal,,,,,dwU9+YKEtUu9qLzWT3nKfg,,,,N,0,0,,,2012-06-18 09:56,2012-06-18 09:56,admin,admin
952,145675,5115,23021,5686,1,0,N,N,N,CP_Drtn,TT_Task,DT_FixedDUR2,RV_OK,TK_NotStart,TSF005,Equipment Erection on Helideck,,400,400,56,0,0,0,56,0,0,0,,,,2013-02-16 08:00,2013-02-23 16:00,,2012-12-16 08:00,2012-12-23 16:00,2012-12-16 08:00,2012-12-23 16:00,2012-12-16 08:00,2012-12-23 16:00,,2013-02-16 08:00,2013-02-23 16:00,,PT_Normal,,,,,tZAiONLPv0mbnAeTeKpHlw,,,,N,0,0,,,2012-06-18 09:56,2012-06-18 09:56,admin,admin
953,145676,5115,23022,5686,1,0,N,N,N,CP_Drtn,TT_Task,DT_FixedDUR2,RV_OK,TK_NotStart,TS07,E&I Activity,,16,16,720,0,0,0,720,0,0,0,,,,2012-11-12 08:00,2013-02-28 16:00,,2012-11-10 08:00,2013-02-26 16:00,2012-11-10 08:00,2013-02-26 16:00,2012-11-10 08:00,2013-02-26 16:00,,2012-11-12 08:00,2013-02-28 16:00,,PT_Normal,,,,,dTL3U50d8UeEWDdc01ftaw,,,,N,0,0,,,2012-06-18 09:56,2012-06-18 09:56,admin,admin
954,145677,5115,23023,5686,1,0,N,N,N,CP_Drtn,TT_Task,DT_FixedDUR2,RV_OK,TK_NotStart,TS08,"Pre-commissioning """" Piping Hydrotest , Reinstatment , Megering , Continuity Test and Touch Up """"",,0,0,280,0,0,0,280,0,0,0,,,,2013-02-18 08:00,2013-03-30 16:00,,2013-02-18 08:00,2013-03-30 16:00,2013-02-18 08:00,2013-03-30 16:00,2013-02-18 08:00,2013-03-30 16:00,,2013-02-18 08:00,2013-03-30 16:00,,PT_Normal,,,,,SPc0wsAetkqWjXylFNS5Mg,,,,Y,0,0,,,2012-06-18 09:56,2012-06-20 10:09,admin,admin
955,145678,5115,22994,5686,1,0,N,N,N,CP_Drtn,TT_Task,DT_FixedDUR2,RV_OK,TK_NotStart,PL01,P/L Spools Fabrication,,832,0,720,0,0,0,720,0,0,0,,,,2012-11-07 08:00,2013-02-24 16:00,,2012-06-30 08:00,2012-10-17 16:00,2012-06-30 08:00,2012-10-17 16:00,2012-06-30 08:00,2012-10-17 16:00,,2012-11-07 08:00,2013-02-24 16:00,,PT_Normal,,,,,jKDRlz/p4EK9Fm15FbuPGg,,,,N,0,0,,,2012-06-18 09:56,2012-06-20 10:08,admin,admin
956,145679,5115,22996,5686,0,0,N,N,N,CP_Drtn,TT_Mile,DT_FixedDrtn,RV_OK,TK_NotStart,LOPS41,Arrival of 01st Shipment Material Barge ( P/L Spools),,0,128,0,0,0,0,0,0,0,0,2012-09-15 08:00,,,2012-09-15 08:00,2012-09-15 08:00,,2012-09-15 08:00,2012-09-15 08:00,2012-09-15 08:00,2012-09-15 08:00,2012-09-15 08:00,2012-09-15 08:00,,2012-09-15 08:00,2012-09-15 08:00,CS_MSO,PT_Normal,,,,,5AuQpc8LH0GOXXQV5nuChw,,,,N,0,0,,,2012-06-18 09:56,2012-06-18 09:56,admin,admin
957,145680,5115,22996,5686,1,0,N,N,N,CP_Drtn,TT_Task,DT_FixedDUR2,RV_OK,TK_NotStart,LOPS42,1st Shipment Material Barge Preparation,,1088,0,96,0,0,0,96,0,0,0,,,,2013-03-20 08:00,2013-04-02 16:00,,2012-10-03 08:00,2012-10-17 16:00,2012-10-03 08:00,2012-10-17 16:00,2012-10-03 08:00,2012-10-17 16:00,,2013-03-20 08:00,2013-04-02 16:00,,PT_Normal,,,,,i/ZL7i+h+EmBiXA1IMRbGQ,,,,N,0,0,,,2012-06-18 09:56,2012-06-18 09:56,admin,admin
958,145681,5115,22996,5686,1,0,N,N,N,CP_Drtn,TT_Task,DT_FixedDUR2,RV_OK,TK_NotStart,LOPS43,"L/O & Sea Fastening (P/L Spools 18"""" & 8"""")",,1088,0,32,0,0,0,32,0,0,0,,,,2013-04-03 08:00,2013-04-07 16:00,,2012-10-18 08:00,2012-10-22 16:00,2012-10-18 08:00,2012-10-22 16:00,2012-10-18 08:00,2012-10-22 16:00,,2013-04-03 08:00,2013-04-07 16:00,,PT_Normal,,,,,SWGpu9JOYEGHzdD3xKVs2g,,,,N,0,0,,,2012-06-18 09:56,2012-06-18 09:56,admin,admin
959,145682,5115,22997,5686,0,0,N,N,N,CP_Drtn,TT_Mile,DT_FixedDrtn,RV_OK,TK_NotStart,LOJK41,Arrival of 02nd Shipment Material Barge ( Jacket and Piles ),,0,263.983333,0,0,0,0,0,0,0,0,2012-12-01 08:01,,,2012-12-01 08:01,2012-12-01 08:01,,2012-12-01 08:01,2012-12-01 08:01,2012-12-01 08:01,2012-12-01 08:01,2012-12-01 08:01,2012-12-01 08:01,,2012-12-01 08:01,2012-12-01 08:01,CS_MSO,PT_Normal,,,,,yzHg23KnA0qyEJCF/3IpWA,,,,N,0,0,,,2012-06-18 09:56,2012-06-20 10:08,admin,admin
960,145683,5115,22997,5686,1,0,N,N,N,CP_Drtn,TT_Task,DT_FixedDUR2,RV_OK,TK_NotStart,LOJK42,02nd Shipment Material Barge Preparation,,208,0,96,0,0,0,96,0,0,0,,,,2013-02-11 08:00,2013-02-24 16:00,,2013-01-09 08:00,2013-01-22 16:00,2013-01-09 08:00,2013-01-22 16:00,2013-01-09 08:00,2013-01-22 16:00,,2013-02-11 08:00,2013-02-24 16:00,,PT_Normal,,,,,kw9K6xSsKU+xZNUpkG3lkA,,,,N,0,0,,,2012-06-18 09:56,2012-06-20 10:08,admin,admin
961,145684,5115,22997,5686,1,0,N,N,N,CP_Drtn,TT_Task,DT_FixedDUR2,RV_OK,TK_NotStart,LOJK43,L/O & Sea fastening ( Jacket & Piles ),,208,0,56,0,0,0,56,0,0,0,,,,2013-02-25 08:00,2013-03-04 16:00,,2013-01-23 08:00,2013-01-31 16:00,2013-01-23 08:00,2013-01-31 16:00,2013-01-23 08:00,2013-01-31 16:00,,2013-02-25 08:00,2013-03-04 16:00,,PT_Normal,,,,,gJDG8p2DW0CwKHv9ggLWww,,,,N,0,0,,,2012-06-18 09:56,2012-06-20 10:08,admin,admin
962,145685,5115,22993,5686,0,0,N,N,N,CP_Drtn,TT_Mile,DT_FixedDrtn,RV_OK,TK_NotStart,LODK41,Arrival of 03rd Shipment Material Barge ( Deck C/W TSF ),,-0.016667,104,0,0,0,0,0,0,0,0,2013-03-01 08:01,,,2013-02-28 15:59,2013-02-28 15:59,,2013-03-02 08:00,2013-03-02 08:00,2013-03-02 08:00,2013-03-02 08:00,2013-03-02 08:00,2013-03-02 08:00,,2013-02-28 15:59,2013-02-28 15:59,CS_MSO,PT_Normal,,,,,DMVMJvKHJEal26/GV8EjYw,,,,N,0,0,,,2012-06-18 09:56,2012-06-20 10:08,admin,admin
963,145686,5115,22993,5686,1,0,N,N,N,CP_Drtn,TT_Task,DT_FixedDUR2,RV_OK,TK_NotStart,LODK42,3rd Shipment Material Barge Preparation,,0,0,96,0,0,0,96,0,0,0,,,,2013-03-17 08:00,2013-03-30 16:00,,2013-03-17 08:00,2013-03-30 16:00,2013-03-17 08:00,2013-03-30 16:00,2013-03-17 08:00,2013-03-30 16:00,,2013-03-17 08:00,2013-03-30 16:00,,PT_Normal,,,,,aUgEPcsPdU6dZKfpyKLqKQ,Z6hgNBy73kGKLbXx2xhiTA,,,Y,0,0,,,2012-06-18 09:56,2012-06-20 10:09,admin,admin
964,145687,5115,22993,5686,1,0,N,N,N,CP_Drtn,TT_Task,DT_FixedDUR2,RV_OK,TK_NotStart,LODK43,L/O & Sea fastening ( Deck),,0,0,56,0,0,0,56,0,0,0,,,,2013-03-31 08:00,2013-04-07 16:00,,2013-03-31 08:00,2013-04-07 16:00,2013-03-31 08:00,2013-04-07 16:00,2013-03-31 08:00,2013-04-07 16:00,,2013-03-31 08:00,2013-04-07 16:00,,PT_Normal,,,,,3ovDhJNni0GFqdBPxvcUNA,,,,Y,0,0,,,2012-06-18 09:56,2012-06-20 10:09,admin,admin
965,145688,5115,22986,794,1,0,N,N,N,CP_Drtn,TT_Task,DT_FixedDrtn,RV_OK,TK_NotStart,PRP12,"Pipeline 8"""" & Fittings",,-0.016667,2087,408,0,0,0,408,0,0,0,2012-05-30 17:00,,,2012-05-30 16:59,2012-07-20 16:59,,2012-05-31 08:00,2012-07-20 17:00,2012-05-31 08:00,2012-07-20 17:00,2012-05-31 08:00,2012-07-20 17:00,,2012-05-30 16:59,2012-07-20 16:59,CS_MSO,PT_Normal,,,,,wl81c97gD0yLkjw0vE6J8Q,Z/LKROCTRSGDBSNh6tw23g,,,N,0,0,,,2012-06-20 10:06,2012-06-20 10:08,admin,admin
966,145689,5115,22974,5686,0,0,N,N,N,CP_Drtn,TT_FinMile,DT_FixedDrtn,RV_OK,TK_NotStart,GM11,Reciving Fax of Award,,-0.016667,0,0,0,0,0,0,0,0,0,2012-01-20 16:00,,,2012-01-19 16:00,2012-01-19 16:00,,2012-01-21 08:01,2012-01-21 08:01,2012-01-21 08:01,2012-01-21 08:01,2012-01-21 08:01,2012-01-21 08:01,,2012-01-19 16:00,2012-01-19 16:00,CS_MEO,PT_Normal,,,,,0tx2rM+YYkS61FfUk5JX3A,mAYBql7WQzuUeAh5RGjavw,,,N,0,0,,,2012-06-20 10:12,2012-06-20 10:12,admin,admin
967,145690,5115,22974,5686,0,0,N,N,N,CP_Drtn,TT_Mile,DT_FixedDrtn,RV_OK,TK_NotStart,GM12,Project Fab. Start,,1951.983333,1952,0,0,0,0,0,0,0,0,,,,2013-04-07 15:59,2013-04-07 15:59,,2012-06-13 08:00,2012-06-13 08:00,2012-06-13 08:00,2012-06-13 08:00,2012-06-13 08:00,2012-06-13 08:00,,2013-04-07 15:59,2013-04-07 15:59,,PT_Normal,,,,,qjoQq1NaoUuNwWnrX6L5aQ,MUGR7HsxSCatq1Lsy+yI2A,,,N,0,0,,,2012-06-20 10:12,2012-06-20 10:12,admin,admin
968,145691,5115,22974,5686,0,0,N,N,N,CP_Drtn,TT_Mile,DT_FixedDrtn,RV_OK,TK_NotStart,GM14,Ready for Load out ( 02nd Shipment/ Jacket & Piles ),,208,208,0,0,0,0,0,0,0,0,,,,2013-02-25 08:00,2013-02-25 08:00,,2013-01-23 08:00,2013-01-23 08:00,2013-01-23 08:00,2013-01-23 08:00,2013-01-23 08:00,2013-01-23 08:00,,2013-02-25 08:00,2013-02-25 08:00,,PT_Normal,,,,,Jp+5Pol9B0COB3dFna2oKg,oEdGu9OnQ0CgAkVlSv8iuw,,,N,0,0,,,2012-06-20 10:12,2012-06-20 10:12,admin,admin
969,145692,5115,22974,5686,0,0,N,N,N,CP_Drtn,TT_Mile,DT_FixedDrtn,RV_OK,TK_NotStart,GM15,Ready for Load out ( 03rd Shipment/ Deck C/W TSF ),,55.983333,56,0,0,0,0,0,0,0,0,,,,2013-04-07 15:59,2013-04-07 15:59,,2013-03-31 08:00,2013-03-31 08:00,2013-03-31 08:00,2013-03-31 08:00,2013-03-31 08:00,2013-03-31 08:00,,2013-04-07 15:59,2013-04-07 15:59,,PT_Normal,,,,,acjoDBIAT0C2hnAf1hjlKQ,h7hpizZeQXG79P6YGic48A,,,N,0,0,,,2012-06-20 10:12,2012-06-20 10:12,admin,admin
970,145693,5115,22974,5686,0,0,N,N,N,CP_Drtn,TT_Mile,DT_FixedDrtn,RV_OK,TK_NotStart,GM13,"Ready for Load out (01st Shipment / Pipeline Spools 18"""" & 8"""")",,1119.983333,1120,0,0,0,0,0,0,0,0,,,,2013-04-07 15:59,2013-04-07 15:59,,2012-10-18 08:00,2012-10-18 08:00,2012-10-18 08:00,2012-10-18 08:00,2012-10-18 08:00,2012-10-18 08:00,,2013-04-07 15:59,2013-04-07 15:59,,PT_Normal,,,,,Aqc5l3mGVkCfPVn73XNTqA,hwMqvqcnTaWjHD3UCB8GZQ,,,N,0,0,,,2012-06-20 10:12,2012-06-20 10:12,admin,admin
971,145694,5115,22983,794,1,0,N,N,N,CP_Drtn,TT_Task,DT_FixedDrtn,RV_OK,TK_NotStart,ENS13,Receiving Jacket Primary & Secondary Steel IFC DWG`s,,0,0,1104,0,0,0,1104,0,0,0,2011-11-30 08:01,,,2011-11-30 08:01,2012-04-16 08:01,,2011-11-30 08:01,2012-04-16 08:01,2011-11-30 08:01,2012-04-16 08:01,2011-11-30 08:01,2012-04-16 08:01,,2011-11-30 08:01,2012-04-16 08:01,CS_MSO,PT_Normal,,,,,r5KLfP4NQUGQlPjZ55uzjA,/taVGz7GStKxIdbmdm3JkA,,,N,0,0,,,2012-06-20 10:12,2012-06-20 10:12,admin,admin
972,145695,5115,22983,794,0,0,N,N,N,CP_Drtn,TT_FinMile,DT_FixedDrtn,RV_OK,TK_NotStart,ENS14,Receiving Piles IFC DWG`s,,0,720,0,0,0,0,0,0,0,0,2012-01-17 08:01,,,2012-01-17 08:01,2012-01-17 08:01,,2012-01-17 08:01,2012-01-17 08:01,2012-01-17 08:01,2012-01-17 08:01,2012-01-17 08:01,2012-01-17 08:01,,2012-01-17 08:01,2012-01-17 08:01,CS_MEO,PT_Normal,,,,,WS3DI4fdkEqjSSJilqQ85A,Na3Aup6tShC+yRgy8OADFw,,,N,0,0,,,2012-06-20 10:12,2012-06-20 10:12,admin,admin
973,145696,5115,22983,794,1,0,N,N,N,CP_Drtn,TT_Task,DT_FixedDUR2,RV_OK,TK_NotStart,ENS15,Receiving Deck Str. Primary & Secondary IFC DWG`s,,0,224,328,0,0,0,328,0,0,0,2012-02-07 08:01,,,2012-02-07 08:01,2012-03-19 08:01,,2012-02-07 08:01,2012-03-19 08:01,2012-02-07 08:01,2012-03-19 08:01,2012-02-07 08:01,2012-03-19 08:01,,2012-02-07 08:01,2012-03-19 08:01,CS_MSO,PT_Normal,,,,,GXlg6DO0f0SkSlCIRmeXGg,fi7weAl5SEGTR2lLUeKx/w,,,N,0,0,,,2012-06-20 10:12,2012-06-20 10:12,admin,admin
974,145697,5115,22983,794,0,0,N,N,N,CP_Drtn,TT_FinMile,DT_FixedDrtn,RV_OK,TK_NotStart,ENS11,"Receiving Final Jacket , Boat Land & Piles MTO",,135.983333,135.983333,0,0,0,0,0,0,0,0,,,,2012-02-14 17:00,2012-02-14 17:00,,2012-01-29 08:01,2012-01-29 08:01,2012-01-29 08:01,2012-01-29 08:01,2012-01-29 08:01,2012-01-29 08:01,,2012-02-14 17:00,2012-02-14 17:00,,PT_Normal,,,,,mhLssRwqa06GSgcFc2idTA,TPEjRmwKRrq6hsy6oKat/g,,,N,0,0,,,2012-06-20 10:12,2012-06-20 10:12,admin,admin
975,145698,5115,22983,794,0,0,N,N,N,CP_Drtn,TT_FinMile,DT_FixedDrtn,RV_OK,TK_NotStart,ENS12,Receiving Final Deck Str. MTO,,135.983333,135.983333,0,0,0,0,0,0,0,0,,,,2012-02-14 17:00,2012-02-14 17:00,,2012-01-29 08:01,2012-01-29 08:01,2012-01-29 08:01,2012-01-29 08:01,2012-01-29 08:01,2012-01-29 08:01,,2012-02-14 17:00,2012-02-14 17:00,,PT_Normal,,,,,pEK81s690UmE4AFfVZ1vFQ,6nkSfB2oQqWjhNUPP6KgpA,,,N,0,0,,,2012-06-20 10:12,2012-06-20 10:12,admin,admin
976,145699,5115,22983,794,1,0,N,N,N,CP_Drtn,TT_Task,DT_FixedDrtn,RV_OK,TK_NotStart,ENS18,Receiving IFC Equipment fixation DWG`s,,0,1559.983333,104,0,0,0,104,0,0,0,2012-04-04 08:01,,,2012-04-04 08:01,2012-04-17 08:01,,2012-04-04 08:01,2012-04-17 08:01,2012-04-04 08:01,2012-04-17 08:01,2012-04-04 08:01,2012-04-17 08:01,,2012-04-04 08:01,2012-04-17 08:01,CS_MSO,PT_Normal,,,,,nHy0W11pPEahAgFJPGWAwg,mm1mBipHSJKSJiX6ECgsuA,,,N,0,0,,,2012-06-20 10:12,2012-06-20 10:12,admin,admin
977,145700,5115,22983,794,1,0,N,N,N,CP_Drtn,TT_Task,DT_FixedDUR2,RV_OK,TK_NotStart,ENS16,Receiving Piping Supports IFC DWG's,,0,3078.983333,160,0,0,0,160,0,0,0,2012-02-28 08:01,,,2012-02-28 08:01,2012-03-19 08:01,,2012-02-28 08:01,2012-03-19 08:01,2012-02-28 08:01,2012-03-19 08:01,2012-02-28 08:01,2012-03-19 08:01,,2012-02-28 08:01,2012-03-19 08:01,CS_MSO,PT_Normal,,,,,dTLs8A8mhU+Sws4ZmWjMdg,00Owhd0XR8uvJLKhPzMELA,,,N,0,0,,,2012-06-20 10:12,2012-06-20 10:12,admin,admin
978,145701,5115,22983,794,1,0,N,N,N,CP_Drtn,TT_Task,DT_FixedDUR2,RV_OK,TK_NotStart,ENS17,Receiving Cable tarys Support IFC DWG's,,0,3022.983333,104,0,0,0,104,0,0,0,2012-03-13 08:01,,,2012-03-13 08:01,2012-03-26 08:01,,2012-03-13 08:01,2012-03-26 08:01,2012-03-13 08:01,2012-03-26 08:01,2012-03-13 08:01,2012-03-26 08:01,,2012-03-13 08:01,2012-03-26 08:01,CS_MSO,PT_Normal,,,,,wMOeAqE0bUyjMUK2aivqmA,JPgGdggzREiAYSQ7vnqU2w,,,N,0,0,,,2012-06-20 10:12,2012-06-20 10:12,admin,admin
979,145702,5115,22983,794,1,0,N,N,N,CP_Drtn,TT_Task,DT_FixedDrtn,RV_OK,TK_NotStart,ENS19,"Receiving P/L 8"""" & 18"""" IFC DWG's",,0,2736,160,0,0,0,160,0,0,0,2012-04-10 16:00,,,2012-04-10 16:00,2012-04-30 16:00,,2012-04-10 16:00,2012-04-30 16:00,2012-04-10 16:00,2012-04-30 16:00,2012-04-10 16:00,2012-04-30 16:00,,2012-04-10 16:00,2012-04-30 16:00,CS_MSO,PT_Normal,,,,,DJZmE6SCF0e+zURCsmsbVg,98Xxuu9fQZixtpBjPwMmlQ,,,N,0,0,,,2012-06-20 10:12,2012-06-20 10:12,admin,admin
980,145703,5115,22981,794,1,0,N,N,N,CP_Drtn,TT_Task,DT_FixedDrtn,RV_OK,TK_NotStart,ENT13,Receiving Piping ISO`s IFC DWG's,,0,1047.983333,112,0,0,0,112,0,0,0,2012-02-27 08:01,,,2012-02-27 08:01,2012-03-12 08:01,,2012-02-27 08:01,2012-03-12 08:01,2012-02-27 08:01,2012-03-12 08:01,2012-02-27 08:01,2012-03-12 08:01,,2012-02-27 08:01,2012-03-12 08:01,CS_MSO,PT_Normal,,,,,vL67ZxlVVUSu3tSbthqiLQ,enOOp99+SsqEvqB5hnSgoA,,,N,0,0,,,2012-06-20 10:12,2012-06-20 10:12,admin,admin
981,145704,5115,22981,794,0,0,N,N,N,CP_Drtn,TT_FinMile,DT_FixedDrtn,RV_OK,TK_NotStart,ENT11,Issue Approved P&ID's / Equipment List IFC DWG's,,0,3584,0,0,0,0,0,0,0,0,2012-01-15 16:00,,,2012-01-15 16:00,2012-01-15 16:00,,2012-01-15 16:00,2012-01-15 16:00,2012-01-15 16:00,2012-01-15 16:00,2012-01-15 16:00,2012-01-15 16:00,,2012-01-15 16:00,2012-01-15 16:00,CS_MEO,PT_Normal,,,,,0m6ZytFLfkOj3mImZEqItw,93sGNlW6QoCv/1ksHG2NzA,,,N,0,0,,,2012-06-20 10:12,2012-06-20 10:12,admin,admin
982,145705,5115,22981,794,0,0,N,N,N,CP_Drtn,TT_FinMile,DT_FixedDrtn,RV_OK,TK_NotStart,ENT12,Issue plat plans IFC DWG's,,0,3408,0,0,0,0,0,0,0,0,2012-02-06 16:00,,,2012-02-06 16:00,2012-02-06 16:00,,2012-02-06 16:00,2012-02-06 16:00,2012-02-06 16:00,2012-02-06 16:00,2012-02-06 16:00,2012-02-06 16:00,,2012-02-06 16:00,2012-02-06 16:00,CS_MEO,PT_Normal,,,,,TPdQXvt6pU2EIbPUCxYmAQ,FmX28kBFQpGSXexVmL7Wlw,,,N,0,0,,,2012-06-20 10:12,2012-06-20 10:12,admin,admin
983,145706,5115,22981,5686,0,0,N,N,N,CP_Drtn,TT_FinMile,DT_FixedDrtn,RV_OK,TK_NotStart,ENT14,Issue Hydrotest maps & loops IFC DWG's,,0,2648,0,0,0,0,0,0,0,0,2012-02-28 16:00,,,2012-02-28 16:00,2012-02-28 16:00,,2012-02-28 16:00,2012-02-28 16:00,2012-02-28 16:00,2012-02-28 16:00,2012-02-28 16:00,2012-02-28 16:00,,2012-02-28 16:00,2012-02-28 16:00,CS_MEO,PT_Normal,,,,,JIwC1QItWUOC93qLk4nWag,5DGNq1VSTqKaHuj3eSEIjw,,,N,0,0,,,2012-06-20 10:12,2012-06-20 10:12,admin,admin
984,145707,5115,22982,794,1,0,N,N,N,CP_Drtn,TT_Task,DT_FixedDUR2,RV_OK,TK_NotStart,ENE11,Receiving E&I IFC DWG`s,,0,2279.983333,776,0,0,0,776,0,0,0,2012-01-23 08:01,,,2012-01-23 08:01,2012-04-29 08:01,,2012-01-23 08:01,2012-04-29 08:01,2012-01-23 08:01,2012-04-29 08:01,2012-01-23 08:01,2012-04-29 08:01,,2012-01-23 08:01,2012-04-29 08:01,CS_MSO,PT_Normal,,,,,zt8y3eBnK0uGHFNOlO0pYw,3Z6l8wXrS6642p/eM8yB1A,,,N,0,0,,,2012-06-20 10:12,2012-06-20 10:12,admin,admin
985,145708,5115,22977,5686,1,0,N,N,N,CP_Drtn,TT_Task,DT_FixedDUR2,RV_OK,TK_NotStart,PF11,Pre-Fabrication of Steel Structure ( Jacket & Piles),,208,0,960,0,0,0,960,0,0,0,,,,2012-07-14 08:00,2012-12-10 16:00,,2012-06-13 08:00,2012-11-08 16:00,2012-06-13 08:00,2012-11-08 16:00,2012-06-13 08:00,2012-11-08 16:00,,2012-07-14 08:00,2012-12-10 16:00,,PT_Normal,,,,,e6ajFkSSrk2MBLtQ7FNzoA,BUUxQXUKQcKvFYRqrGtbRg,,,N,0,0,,,2012-06-20 10:12,2012-06-20 10:12,admin,admin
986,145709,5115,22995,794,1,0,N,N,N,CP_Drtn,TT_Task,DT_FixedDUR2,RV_OK,TK_NotStart,PRT21,Piping Bulk material 1st batch,,-0.016667,536,240,0,0,0,240,0,0,0,2012-05-07 17:00,,,2012-05-07 16:59,2012-06-06 16:59,,2012-05-08 08:00,2012-06-06 17:00,2012-05-08 08:00,2012-06-06 17:00,2012-05-08 08:00,2012-06-06 17:00,,2012-05-07 16:59,2012-06-06 16:59,CS_MSO,PT_Normal,,,,,yePA2boXWkezgAJXyl7RNg,DqLN36xRQY+kZsfpyGsU9w,,,N,0,0,,,2012-06-20 10:12,2012-06-20 10:12,admin,admin
987,145710,5115,22995,794,1,0,N,N,N,CP_Drtn,TT_Task,DT_FixedDUR2,RV_OK,TK_NotStart,PRT22,Piping Bulk material 2nd batch,,-0.016667,855,240,0,0,0,240,0,0,0,2012-06-10 17:00,,,2012-06-10 16:59,2012-07-10 16:59,,2012-06-11 08:00,2012-07-10 17:00,2012-06-11 08:00,2012-07-10 17:00,2012-06-11 08:00,2012-07-10 17:00,,2012-06-10 16:59,2012-07-10 16:59,CS_MSO,PT_Normal,,,,,/64sORyEwUyGDIPB6y6vqg,fRmh57i3SamJM0o1p2/3vA,,,N,0,0,,,2012-06-20 10:12,2012-06-20 10:12,admin,admin
988,145711,5115,22995,794,1,0,N,N,N,CP_Drtn,TT_Task,DT_FixedDUR2,RV_OK,TK_NotStart,PRT13,Piping Valves Bulk material 1st batch,,-0.016667,999,112,0,0,0,112,0,0,0,2012-06-23 17:00,,,2012-06-23 16:59,2012-07-07 16:59,,2012-06-24 08:00,2012-07-07 17:00,2012-06-24 08:00,2012-07-07 17:00,2012-06-24 08:00,2012-07-07 17:00,,2012-06-23 16:59,2012-07-07 16:59,CS_MSO,PT_Normal,,,,,To9b+S+vtUOhjF50xHov1w,7wg9/w/MQ7a7zI20+pTM+A,,,N,0,0,,,2012-06-20 10:12,2012-06-20 10:12,admin,admin
989,145712,5115,22995,794,1,0,N,N,N,CP_Drtn,TT_Task,DT_FixedDUR2,RV_OK,TK_NotStart,PRT14,Piping valves Bulk material 2nd batch,,-0.016667,767,112,0,0,0,112,0,0,0,2012-07-22 17:00,,,2012-07-22 16:59,2012-08-05 16:59,,2012-07-23 08:00,2012-08-05 17:00,2012-07-23 08:00,2012-08-05 17:00,2012-07-23 08:00,2012-08-05 17:00,,2012-07-22 16:59,2012-08-05 16:59,CS_MSO,PT_Normal,,,,,lhoCleCU+06HQXP51M5OHA,iGFfO+XNTpqt+16+eOx2EA,,,N,0,0,,,2012-06-20 10:12,2012-06-20 10:12,admin,admin
990,145713,5115,22995,794,1,0,N,N,N,CP_Drtn,TT_Task,DT_FixedDUR2,RV_OK,TK_NotStart,PRT15,Flanges,,-0.016667,8,360,0,0,0,360,0,0,0,2012-07-13 17:00,,,2012-07-13 16:59,2012-08-27 16:59,,2012-07-14 08:00,2012-08-27 17:00,2012-07-14 08:00,2012-08-27 17:00,2012-07-14 08:00,2012-08-27 17:00,,2012-07-13 16:59,2012-08-27 16:59,CS_MSO,PT_Normal,,,,,XubVymi9dkWc9YxZH0x+0Q,VAq1SSMERrmj1gqIqoQiTg,,,N,0,0,,,2012-06-20 10:12,2012-06-20 10:12,admin,admin
991,145714,5115,22995,794,1,0,N,N,N,CP_Drtn,TT_Task,DT_FixedDUR2,RV_OK,TK_NotStart,PRT16,Pressure Safety Valve,,-0.016667,1519,352,0,0,0,352,0,0,0,2012-06-04 17:00,,,2012-06-04 16:59,2012-07-18 16:59,,2012-06-05 08:00,2012-07-18 17:00,2012-06-05 08:00,2012-07-18 17:00,2012-06-05 08:00,2012-07-18 17:00,,2012-06-04 16:59,2012-07-18 16:59,CS_MSO,PT_Normal,,,,,8H9p/BOt8k+XEDL56sbEcw,+SvOOjbVT6SM2f4LWOHEpg,,,N,0,0,,,2012-06-20 10:12,2012-06-20 10:12,admin,admin
992,145715,5115,22995,794,1,0,N,N,N,CP_Drtn,TT_Task,DT_FixedDUR2,RV_OK,TK_NotStart,PRT17,Pressure regulator Valve,,-0.016667,1231,240,0,0,0,240,0,0,0,2012-07-24 17:00,,,2012-07-24 16:59,2012-08-23 16:59,,2012-07-25 08:00,2012-08-23 17:00,2012-07-25 08:00,2012-08-23 17:00,2012-07-25 08:00,2012-08-23 17:00,,2012-07-24 16:59,2012-08-23 16:59,CS_MSO,PT_Normal,,,,,LdqMvSuKok6LE1DosjfEUQ,FkVucARhQlCiyikicegBhQ,,,N,0,0,,,2012-06-20 10:12,2012-06-20 10:12,admin,admin
993,145716,5115,22995,794,1,0,N,N,N,CP_Drtn,TT_Task,DT_FixedDUR2,RV_OK,TK_NotStart,PRT18,Shutdown Valve,,-0.016667,1135,248,0,0,0,248,0,0,0,2012-08-04 17:00,,,2012-08-04 16:59,2012-09-04 16:59,,2012-08-05 08:00,2012-09-04 17:00,2012-08-05 08:00,2012-09-04 17:00,2012-08-05 08:00,2012-09-04 17:00,,2012-08-04 16:59,2012-09-04 16:59,CS_MSO,PT_Normal,,,,,nxNCnmRdGEuZU1LT6DN7GQ,GViNUzKNR0i8XYjXx02J5Q,,,N,0,0,,,2012-06-20 10:12,2012-06-20 10:12,admin,admin
994,145717,5115,22984,794,1,0,N,N,N,CP_Drtn,TT_Task,DT_FixedDUR2,RV_OK,TK_NotStart,PRT19,Chemical Injection PKG.,,-0.016667,1264,360,0,0,0,360,0,0,0,2012-05-08 17:00,,,2012-05-08 16:59,2012-06-22 16:59,,2012-05-09 08:00,2012-06-22 17:00,2012-05-09 08:00,2012-06-22 17:00,2012-05-09 08:00,2012-06-22 17:00,,2012-05-08 16:59,2012-06-22 16:59,CS_MSO,PT_Normal,,,,,/hGCninLaUaLRfDYeDazBQ,eKvs6VRWSyOb6HNtkF9+AA,,,N,0,0,,,2012-06-20 10:12,2012-06-20 10:12,admin,admin
995,145718,5115,22984,794,1,0,N,N,N,CP_Drtn,TT_Task,DT_FixedDUR2,RV_OK,TK_NotStart,PRT20,Launcher recivier,,-0.016667,960,360,0,0,0,360,0,0,0,2012-06-15 17:00,,,2012-06-15 16:59,2012-07-30 16:59,,2012-06-16 08:00,2012-07-30 17:00,2012-06-16 08:00,2012-07-30 17:00,2012-06-16 08:00,2012-07-30 17:00,,2012-06-15 16:59,2012-07-30 16:59,CS_MSO,PT_Normal,,,,,WCXhvdpu5UWJ9o02+GkRiQ,3IwzhhfhR3KgxUsvdJ6rqQ,,,N,0,0,,,2012-06-20 10:12,2012-06-20 10:12,admin,admin
996,145719,5115,22984,794,1,0,N,N,N,CP_Drtn,TT_Task,DT_FixedDUR2,RV_OK,TK_NotStart,PRT31,Vent KOD,,-0.016667,864,360,0,0,0,360,0,0,0,2012-06-27 17:00,,,2012-06-27 16:59,2012-08-11 16:59,,2012-06-28 08:00,2012-08-11 17:00,2012-06-28 08:00,2012-08-11 17:00,2012-06-28 08:00,2012-08-11 17:00,,2012-06-27 16:59,2012-08-11 16:59,CS_MSO,PT_Normal,,,,,nA4snTwP/Uy5rLgyHGoY8A,V+De5pWvTHyHzJo6bSHRww,,,N,0,0,,,2012-06-20 10:12,2012-06-20 10:12,admin,admin
997,145720,5115,22984,794,1,0,N,N,N,CP_Drtn,TT_Task,DT_FixedDUR2,RV_OK,TK_NotStart,PRT32,Open Drain Tank,,-0.016667,624,360,0,0,0,360,0,0,0,2012-06-27 17:00,,,2012-06-27 16:59,2012-08-11 16:59,,2012-06-28 08:00,2012-08-11 17:00,2012-06-28 08:00,2012-08-11 17:00,2012-06-28 08:00,2012-08-11 17:00,,2012-06-27 16:59,2012-08-11 16:59,CS_MSO,PT_Normal,,,,,K1v3fa+QtEeb8jDNmMfnvw,Dvo6DiXYTvSm95/lOoAUnw,,,N,0,0,,,2012-06-20 10:12,2012-06-20 10:12,admin,admin
998,145721,5115,22985,794,1,0,N,N,N,CP_Drtn,TT_Task,DT_FixedDUR2,RV_OK,TK_NotStart,PRS13,Delivery of Structure Material (F.O.B - 13 Wks.) - (Gupco Responsability),,0,0,728,0,0,0,728,0,0,0,,,,2012-02-15 08:00,2012-05-15 17:00,,2012-02-15 08:00,2012-05-15 17:00,2012-02-15 08:00,2012-05-15 17:00,2012-02-15 08:00,2012-05-15 17:00,,2012-02-15 08:00,2012-05-15 17:00,,PT_Normal,,,,,7Xjo8Ui4FUGmG7RuxV4sgw,dmjGd5dtRyGQN7eIgjvWtA,,,Y,0,0,,,2012-06-20 10:12,2012-06-20 10:12,admin,admin
999,145722,5115,22985,794,1,0,N,N,N,CP_Drtn,TT_Task,DT_FixedDUR2,RV_OK,TK_NotStart,PRS15,Material check with IFC DWG's to Prepare balance material,,1566.983333,0,56,0,0,0,56,0,0,0,,,,2012-10-28 16:00,2012-11-04 16:00,,2012-04-16 08:01,2012-04-23 08:01,2012-04-16 08:01,2012-04-23 08:01,2012-04-16 08:01,2012-04-23 08:01,,2012-10-28 16:00,2012-11-04 16:00,,PT_Normal,,,,,H6XN+MVpO0CCSO0PBAthtQ,TiJCnNvxQjGqD/lEVDLgtw,,,N,0,0,,,2012-06-20 10:12,2012-06-20 10:12,admin,admin
1000,145723,5115,22985,794,1,0,N,N,N,CP_Drtn,TT_Task,DT_FixedDUR2,RV_OK,TK_NotStart,PRS16,Delivery of balance material,,1566.983333,1566.983333,1232,0,0,0,1232,0,0,0,,,,2012-11-04 16:00,2013-04-07 16:00,,2012-04-23 08:01,2012-09-24 08:01,2012-04-23 08:01,2012-09-24 08:01,2012-04-23 08:01,2012-09-24 08:01,,2012-11-04 16:00,2013-04-07 16:00,,PT_Normal,,,,,q6vxaZAo00mW/UbxiuYkig,oU6FnPOSQS+kCV/HY5y5yA,,,N,0,0,,,2012-06-20 10:12,2012-06-20 10:12,admin,admin
1001,145724,5115,22985,794,0,0,N,N,N,CP_Drtn,TT_Mile,DT_FixedDrtn,RV_OK,TK_NotStart,PRS11,Issue Structural Material P.O's ( Gupco Responsability),,0,64,0,0,0,0,0,0,0,0,2012-02-07 08:00,,,2012-02-07 08:00,2012-02-07 08:00,,2012-02-07 08:00,2012-02-07 08:00,2012-02-07 08:00,2012-02-07 08:00,2012-02-07 08:00,2012-02-07 08:00,,2012-02-07 08:00,2012-02-07 08:00,CS_MSO,PT_Normal,,,,,dsXqQ5H0tkuQRpHLXmO/LA,xF9X1iufT72bd1+OFKWOyQ,,,N,0,0,,,2012-06-20 10:12,2012-06-20 10:12,admin,admin
1002,145725,5115,22985,794,0,0,N,N,N,CP_Drtn,TT_Mile,DT_FixedDrtn,RV_OK,TK_NotStart,PRS12,Issue LC ( Gupco Responsability),,0,0,0,0,0,0,0,0,0,0,2012-02-15 08:00,,,2012-02-15 08:00,2012-02-15 08:00,,2012-02-15 08:00,2012-02-15 08:00,2012-02-15 08:00,2012-02-15 08:00,2012-02-15 08:00,2012-02-15 08:00,,2012-02-15 08:00,2012-02-15 08:00,CS_MSO,PT_Normal,,,,,/9da9SHK80KIU7swCMIP3A,um/v71UCSm2K8HwIWZ36mg,,,Y,0,0,,,2012-06-20 10:12,2012-06-20 10:12,admin,admin
1003,145726,5115,22985,794,1,0,N,N,N,CP_Drtn,TT_Task,DT_FixedDUR2,RV_OK,TK_NotStart,PRS14,Delivery of Structure Material at Site (4 Wks.),,0,0,224,0,0,0,224,0,0,0,,,,2012-05-16 08:00,2012-06-12 17:00,,2012-05-16 08:00,2012-06-12 17:00,2012-05-16 08:00,2012-06-12 17:00,2012-05-16 08:00,2012-06-12 17:00,,2012-05-16 08:00,2012-06-12 17:00,,PT_Normal,,,,,UP2a8L1+SEiLb4yZ3pPFcg,FqPfFJhLQ+SL9TfNEDcs7w,,,Y,0,0,,,2012-06-20 10:12,2012-06-20 10:12,admin,admin
1004,145727,5115,22986,794,1,0,N,N,N,CP_Drtn,TT_Task,DT_FixedDrtn,RV_OK,TK_NotStart,PRP11,"Pipeline 18"""" & Fittings",,0,0,408,0,0,0,408,0,0,0,2012-05-31 08:00,,,2012-05-31 08:00,2012-07-20 17:00,,2012-05-31 08:00,2012-07-20 17:00,2012-05-31 08:00,2012-07-20 17:00,2012-05-31 08:00,2012-07-20 17:00,,2012-05-31 08:00,2012-07-20 17:00,CS_MSO,PT_Normal,,,,,jtehaELUpEGZ01/BocW8Lg,8zKzqtp8RUKmTAsXxykRFA,,,N,0,0,,,2012-06-20 10:12,2012-06-20 10:12,admin,admin
1005,145728,5115,22986,794,1,0,N,N,N,CP_Drtn,TT_Task,DT_FixedDrtn,RV_OK,TK_NotStart,PRP22,"Pipeline 8"""" & Fittings",,-0.016667,351,408,0,0,0,408,0,0,0,2012-05-30 17:00,,,2012-05-30 16:59,2012-07-20 16:59,,2012-05-31 08:00,2012-07-20 17:00,2012-05-31 08:00,2012-07-20 17:00,2012-05-31 08:00,2012-07-20 17:00,,2012-05-30 16:59,2012-07-20 16:59,CS_MSO,PT_Normal,,,,,ODHjQf4knkmml7e6HhLNig,Z/LKROCTRSGDBSNh6tw23g,,,N,0,0,,,2012-06-20 10:12,2012-06-20 10:12,admin,admin
1006,145729,5115,23010,794,1,0,N,N,N,CP_Drtn,TT_Task,DT_FixedDUR2,RV_OK,TK_NotStart,PRE17,Radar system,,-0.016667,904,240,0,0,0,240,0,0,0,2012-06-19 17:00,,,2012-06-19 16:59,2012-07-19 16:59,,2012-06-20 08:00,2012-07-19 17:00,2012-06-20 08:00,2012-07-19 17:00,2012-06-20 08:00,2012-07-19 17:00,,2012-06-19 16:59,2012-07-19 16:59,CS_MSO,PT_Normal,,,,,eyQ3SlvbIkypuyykBxEveg,fN9/pTqqS/2bIA0m5B7Ztw,,,N,0,0,,,2012-06-20 10:12,2012-06-20 10:12,admin,admin
1007,145730,5115,23010,794,1,0,N,N,N,CP_Drtn,TT_Task,DT_FixedDUR2,RV_OK,TK_NotStart,PRE18,Navegation Aids,,-0.016667,1384,360,0,0,0,360,0,0,0,2012-04-05 17:00,,,2012-04-05 16:59,2012-05-20 16:59,,2012-04-06 08:00,2012-05-20 17:00,2012-04-06 08:00,2012-05-20 17:00,2012-04-06 08:00,2012-05-20 17:00,,2012-04-05 16:59,2012-05-20 16:59,CS_MSO,PT_Normal,,,,,S0TkFWhe1EGTONBbrTKtgA,/agS5N51QBGq3ZFFA4yHkQ,,,N,0,0,,,2012-06-20 10:12,2012-06-20 10:12,admin,admin
1008,145731,5115,23006,794,1,0,N,N,N,CP_Drtn,TT_Task,DT_FixedDUR2,RV_OK,TK_NotStart,PRE21,Electrical Bulks,,-0.016667,512,360,0,0,0,360,0,0,0,2012-07-23 17:00,,,2012-07-23 16:59,2012-09-06 16:59,,2012-07-24 08:00,2012-09-06 17:00,2012-07-24 08:00,2012-09-06 17:00,2012-07-24 08:00,2012-09-06 17:00,,2012-07-23 16:59,2012-09-06 16:59,CS_MSO,PT_Normal,,,,,9nlBN39pZEi3YOmwjAseOw,vQ/i5SbETo6/zhp0lbrKxA,,,N,0,0,,,2012-06-20 10:12,2012-06-20 10:12,admin,admin
1009,145732,5115,23006,794,1,0,N,N,N,CP_Drtn,TT_Task,DT_FixedDUR2,RV_OK,TK_NotStart,PRE22,Cathodic Protection,,-0.016667,1000,360,0,0,0,360,0,0,0,2012-05-23 17:00,,,2012-05-23 16:59,2012-07-07 16:59,,2012-05-24 08:00,2012-07-07 17:00,2012-05-24 08:00,2012-07-07 17:00,2012-05-24 08:00,2012-07-07 17:00,,2012-05-23 16:59,2012-07-07 16:59,CS_MSO,PT_Normal,,,,,3urHzEkLIEydjonGx/0onw,Iw4lArETRiW8xPu6VxnShg,,,N,0,0,,,2012-06-20 10:12,2012-06-20 10:12,admin,admin
1010,145733,5115,23006,794,1,0,N,N,N,CP_Drtn,TT_Task,DT_FixedDUR2,RV_OK,TK_NotStart,PRE23,Solar Power,,-0.016667,912,360,0,0,0,360,0,0,0,2012-06-03 17:00,,,2012-06-03 16:59,2012-07-18 16:59,,2012-06-04 08:00,2012-07-18 17:00,2012-06-04 08:00,2012-07-18 17:00,2012-06-04 08:00,2012-07-18 17:00,,2012-06-03 16:59,2012-07-18 16:59,CS_MSO,PT_Normal,,,,,1I0SSUVqkkakCy12DR9dmg,VN0an5lGRoaFh0fMNvkkFA,,,N,0,0,,,2012-06-20 10:12,2012-06-20 10:12,admin,admin
1011,145734,5115,23007,794,1,0,N,N,N,CP_Drtn,TT_Task,DT_FixedDUR2,RV_OK,TK_NotStart,PRE14,F&G Detector,,-0.016667,648,360,0,0,0,360,0,0,0,2012-07-06 17:00,,,2012-07-06 16:59,2012-08-20 16:59,,2012-07-07 08:00,2012-08-20 17:00,2012-07-07 08:00,2012-08-20 17:00,2012-07-07 08:00,2012-08-20 17:00,,2012-07-06 16:59,2012-08-20 16:59,CS_MSO,PT_Normal,,,,,zprixgU3DE67FFWBRU5BkA,VSwOK9yIRUSoxROQDvdw7g,,,N,0,0,,,2012-06-20 10:12,2012-06-20 10:12,admin,admin
1012,145735,5115,23007,794,1,0,N,N,N,CP_Drtn,TT_Task,DT_FixedDUR2,RV_OK,TK_NotStart,PRE15,Fire fighting system,,-0.016667,720,360,0,0,0,360,0,0,0,2012-06-27 17:00,,,2012-06-27 16:59,2012-08-11 16:59,,2012-06-28 08:00,2012-08-11 17:00,2012-06-28 08:00,2012-08-11 17:00,2012-06-28 08:00,2012-08-11 17:00,,2012-06-27 16:59,2012-08-11 16:59,CS_MSO,PT_Normal,,,,,Dsm6QgqW8km8whEyGqIL2Q,tpzm+A81SOKv9OzobhMGlw,,,N,0,0,,,2012-06-20 10:12,2012-06-20 10:12,admin,admin
1013,145736,5115,23007,794,1,0,N,N,N,CP_Drtn,TT_Task,DT_FixedDUR2,RV_OK,TK_NotStart,PRE16,Life Saving Equipment,,-0.016667,664,360,0,0,0,360,0,0,0,2012-07-04 17:00,,,2012-07-04 16:59,2012-08-18 16:59,,2012-07-05 08:00,2012-08-18 17:00,2012-07-05 08:00,2012-08-18 17:00,2012-07-05 08:00,2012-08-18 17:00,,2012-07-04 16:59,2012-08-18 16:59,CS_MSO,PT_Normal,,,,,ZnRv815Of02PhI8dOoQ3pg,KFlMp1iuR7Ggn/R36j8DNg,,,N,0,0,,,2012-06-20 10:12,2012-06-20 10:12,admin,admin
1014,145737,5115,23008,794,1,0,N,N,N,CP_Drtn,TT_Task,DT_FixedDUR2,RV_OK,TK_NotStart,PRE19,Instrument Electical Bulk,,-0.016667,624,240,0,0,0,240,0,0,0,2012-07-24 17:00,,,2012-07-24 16:59,2012-08-23 16:59,,2012-07-25 08:00,2012-08-23 17:00,2012-07-25 08:00,2012-08-23 17:00,2012-07-25 08:00,2012-08-23 17:00,,2012-07-24 16:59,2012-08-23 16:59,CS_MSO,PT_Normal,,,,,fjOhvdBTqUiZo8yXYTkXjA,nbERwAGrT3emToa6M54rSw,,,N,0,0,,,2012-06-20 10:12,2012-06-20 10:12,admin,admin
1015,145738,5115,23008,794,1,0,N,N,N,CP_Drtn,TT_Task,DT_FixedDUR2,RV_OK,TK_NotStart,PRE20,Instrument Mechanical Bulk,,-0.016667,640,280,0,0,0,280,0,0,0,2012-07-17 17:00,,,2012-07-17 16:59,2012-08-21 16:59,,2012-07-18 08:00,2012-08-21 17:00,2012-07-18 08:00,2012-08-21 17:00,2012-07-18 08:00,2012-08-21 17:00,,2012-07-17 16:59,2012-08-21 16:59,CS_MSO,PT_Normal,,,,,e/klo6vmWUmDj9cMu/UC/Q,I5ckdTYuQTKukOCM1JedFw,,,N,0,0,,,2012-06-20 10:12,2012-06-20 10:12,admin,admin
1016,145739,5115,23008,794,1,0,N,N,N,CP_Drtn,TT_Task,DT_FixedDUR2,RV_OK,TK_NotStart,PRE31,Field Instrument,,-0.016667,760,360,0,0,0,360,0,0,0,2012-06-22 17:00,,,2012-06-22 16:59,2012-08-06 16:59,,2012-06-23 08:00,2012-08-06 17:00,2012-06-23 08:00,2012-08-06 17:00,2012-06-23 08:00,2012-08-06 17:00,,2012-06-22 16:59,2012-08-06 16:59,CS_MSO,PT_Normal,,,,,v4ahREwHLE6lgRC5VZPIjw,M/41QxsNRJS7+vZ1Rp7jJg,,,N,0,0,,,2012-06-20 10:12,2012-06-20 10:12,admin,admin
1017,145740,5115,23008,794,1,0,N,N,N,CP_Drtn,TT_Task,DT_FixedDUR2,RV_OK,TK_NotStart,PRE32,multi phase flow meter,,-0.016667,1095,456,0,0,0,456,0,0,0,2012-07-17 17:00,,,2012-07-17 16:59,2012-09-12 16:59,,2012-07-18 08:00,2012-09-12 17:00,2012-07-18 08:00,2012-09-12 17:00,2012-07-18 08:00,2012-09-12 17:00,,2012-07-17 16:59,2012-09-12 16:59,CS_MSO,PT_Normal,,,,,CDEdw4MiZUKioTyFJ4XF3g,VbJvQNUwQvmr5G5TNU296w,,,N,0,0,,,2012-06-20 10:12,2012-06-20 10:12,admin,admin
1018,145741,5115,23008,794,1,0,N,N,N,CP_Drtn,TT_Task,DT_FixedDUR2,RV_OK,TK_NotStart,PRE33,Safe Guard system,,-0.016667,1063,240,0,0,0,240,0,0,0,2012-08-17 17:00,,,2012-08-17 16:59,2012-09-16 16:59,,2012-08-18 08:00,2012-09-16 17:00,2012-08-18 08:00,2012-09-16 17:00,2012-08-18 08:00,2012-09-16 17:00,,2012-08-17 16:59,2012-09-16 16:59,CS_MSO,PT_Normal,,,,,Ha609JewX0itXEvxExwHeA,jReSS16pSoan6pMZsdEk8g,,,N,0,0,,,2012-06-20 10:12,2012-06-20 10:12,admin,admin
1019,145742,5115,22991,5686,1,0,N,N,N,CP_Drtn,TT_Task,DT_FixedDUR2,RV_OK,TK_NotStart,JK11,"Jacket , Boat Landing Fabrication & Painting",,208,0,1400,0,0,0,1400,0,0,0,,,,2012-07-22 08:00,2013-02-24 16:00,,2012-06-21 08:00,2013-01-22 16:00,2012-06-21 08:00,2013-01-22 16:00,2012-06-21 08:00,2013-01-22 16:00,,2012-07-22 08:00,2013-02-24 16:00,,PT_Normal,,,,,tlOAk4i0jkm+BexGVW/SXQ,MJjexNjLRy6cxfkloFqepA,,,N,0,0,,,2012-06-20 10:12,2012-06-20 10:12,admin,admin
1020,145743,5115,22991,5686,1,0,N,N,N,CP_Drtn,TT_Task,DT_FixedDUR2,RV_OK,TK_NotStart,JK12,Piles Fabrication & Marking,,592,592,1000,0,0,0,1000,0,0,0,,,,2012-11-08 08:00,2013-04-07 16:00,,2012-08-06 08:00,2013-01-08 16:00,2012-08-06 08:00,2013-01-08 16:00,2012-08-06 08:00,2013-01-08 16:00,,2012-11-08 08:00,2013-04-07 16:00,,PT_Normal,,,,,V5kd53FqKkyaNo9UcOuifA,cmwt03k5QUWVZ2X2eta6kg,,,N,0,0,,,2012-06-20 10:12,2012-06-20 10:12,admin,admin
1021,145744,5115,23001,5686,1,0,N,N,N,CP_Drtn,TT_Task,DT_FixedDUR2,RV_OK,TK_NotStart,DS011,Fabrication and Painting of Below Production Deck/Legs,,0,0,840,0,0,0,840,0,0,0,,,,2012-06-13 08:00,2012-10-18 16:00,,2012-06-13 08:00,2012-10-18 16:00,2012-06-13 08:00,2012-10-18 16:00,2012-06-13 08:00,2012-10-18 16:00,,2012-06-13 08:00,2012-10-18 16:00,,PT_Normal,,,,,yRS2FM1lzkWE5aVfBLPw7A,YDhnGt4WSampcAcCK/B2gQ,,,Y,0,0,,,2012-06-20 10:12,2012-06-20 10:12,admin,admin
1022,145745,5115,23001,5686,1,0,N,N,N,CP_Drtn,TT_Task,DT_FixedDUR2,RV_OK,TK_NotStart,DS012,Fabrication and Painting of Production Deck,,0,0,960,0,0,0,960,0,0,0,,,,2012-06-13 08:00,2012-11-08 16:00,,2012-06-13 08:00,2012-11-08 16:00,2012-06-13 08:00,2012-11-08 16:00,2012-06-13 08:00,2012-11-08 16:00,,2012-06-13 08:00,2012-11-08 16:00,,PT_Normal,,,,,DTyYAjo9fEGVtLMYk+YTqQ,xFi93CoKSi++4GmIMxpP9w,,,Y,0,0,,,2012-06-20 10:12,2012-06-20 10:12,admin,admin
1023,145746,5115,23001,5686,1,0,N,N,N,CP_Drtn,TT_Task,DT_FixedDUR2,RV_OK,TK_NotStart,DS013,Fabrication and Paint of Heli-Deck ( & Lifting if Required),,400,0,960,0,0,0,960,0,0,0,,,,2012-10-29 08:00,2013-03-21 16:00,,2012-08-27 08:00,2013-01-20 16:00,2012-08-27 08:00,2013-01-20 16:00,2012-08-27 08:00,2013-01-20 16:00,,2012-10-29 08:00,2013-03-21 16:00,,PT_Normal,,,,,VychXyu7bE2Xj+YpOxkTWg,rvAg4dTFTzOC9LQPbMvlVA,,,N,0,0,,,2012-06-20 10:12,2012-06-20 10:12,admin,admin
1024,145747,5115,23001,5686,1,0,N,N,N,CP_Drtn,TT_Task,DT_FixedDUR2,RV_OK,TK_NotStart,DS014,Lifting Below Production Deck on High Cups,,24,0,40,0,0,0,40,0,0,0,,,,2012-10-23 08:00,2012-10-31 16:00,,2012-10-20 08:00,2012-10-24 16:00,2012-10-20 08:00,2012-10-24 16:00,2012-10-20 08:00,2012-10-24 16:00,,2012-10-23 08:00,2012-10-31 16:00,,PT_Normal,,,,,ceiOFoQp9kK3x4ElUE3KSg,bQ+CxC0TQriVcwNqie/vXQ,,,N,0,0,,,2012-06-20 10:12,2012-06-20 10:12,admin,admin
1025,145748,5115,23001,5686,1,0,N,N,N,CP_Drtn,TT_Task,DT_FixedDUR2,RV_OK,TK_NotStart,DS015,Lifting Production Deck on Below Production Level,,0,0,120,0,0,0,120,0,0,0,,,,2012-11-10 08:00,2012-11-27 16:00,,2012-11-10 08:00,2012-11-27 16:00,2012-11-10 08:00,2012-11-27 16:00,2012-11-10 08:00,2012-11-27 16:00,,2012-11-10 08:00,2012-11-27 16:00,,PT_Normal,,,,,6yFlfVcBZ0mvY8Ex3L4cWA,kvv6UChdRT2TML26fqP2Og,,,Y,0,0,,,2012-06-20 10:12,2012-06-20 10:12,admin,admin
1026,145749,5115,23001,5686,1,0,N,N,N,CP_Drtn,TT_Task,DT_FixedDUR2,RV_OK,TK_NotStart,DS016,Fabrication & Installation of Deck Str. Miscellence / Padeyes,,80,24,960,0,0,0,960,0,0,0,,,,2012-10-17 08:00,2013-03-13 16:00,,2012-10-04 08:00,2013-03-02 16:00,2012-10-04 08:00,2013-03-02 16:00,2012-10-04 08:00,2013-03-02 16:00,,2012-10-17 08:00,2013-03-13 16:00,,PT_Normal,,,,,aIcJZwZL80e12D2hARfg5Q,CWEx43mfRrCS6ZOEt8Q5OA,,,N,0,0,,,2012-06-20 10:12,2012-06-20 10:12,admin,admin
1027,145750,5115,23001,5686,0,0,N,N,N,CP_Drtn,TT_FinMile,DT_FixedDrtn,RV_OK,TK_NotStart,DS017,Physical Weighting,,80,0,0,0,0,0,0,0,0,0,,,,2013-03-06 16:00,2013-03-06 16:00,,2013-02-23 16:00,2013-02-23 16:00,2013-02-23 16:00,2013-02-23 16:00,2013-02-23 16:00,2013-02-23 16:00,,2013-03-06 16:00,2013-03-06 16:00,,PT_Normal,,,,,3mZYx1CAgk6U63QzXYXHcg,dU19c7ngSBGK2PpNjJWMWA,,,N,0,0,,,2012-06-20 10:12,2012-06-20 10:12,admin,admin
1028,145751,5115,23001,5686,1,0,N,N,N,CP_Drtn,TT_Task,DT_FixedDUR2,RV_OK,TK_NotStart,DS018,Clearanse of structure (Fab. & Painting ) Punch List,,56,56,168,0,0,0,168,0,0,0,,,,2013-03-14 08:00,2013-04-07 16:00,,2013-03-06 08:00,2013-03-30 16:00,2013-03-06 08:00,2013-03-30 16:00,2013-03-06 08:00,2013-03-30 16:00,,2013-03-14 08:00,2013-04-07 16:00,,PT_Normal,,,,,HpXyOWv/TEKMBm70c/qlXw,2xbSngZtS1yuYdYRZesY/A,,,N,0,0,,,2012-06-20 10:12,2012-06-20 10:12,admin,admin
1029,145752,5115,23024,5686,1,0,N,N,N,CP_Drtn,TT_Task,DT_FixedDUR2,RV_OK,TK_NotStart,TFS011,Piping and Piping Supports Fabrication and Painting,,320,320,800,0,0,0,800,0,0,0,,,,2012-09-10 08:00,2013-01-10 16:00,,2012-07-21 08:00,2012-11-24 16:00,2012-07-21 08:00,2012-11-24 16:00,2012-07-21 08:00,2012-11-24 16:00,,2012-09-10 08:00,2013-01-10 16:00,,PT_Normal,,,,,rXrDatnEoEGII6BWYYRlBQ,MmyOxGLAQBKzrY9ic24SKw,,,N,0,0,,,2012-06-20 10:12,2012-06-20 10:12,admin,admin
1030,145753,5115,23024,5686,1,0,N,N,N,CP_Drtn,TT_Task,DT_FixedDUR2,RV_OK,TK_NotStart,TSF012,Piping and Piping Supports Erection,,0,0,600,0,0,0,600,0,0,0,,,,2012-11-25 08:00,2013-02-23 16:00,,2012-11-25 08:00,2013-02-23 16:00,2012-11-25 08:00,2013-02-23 16:00,2012-11-25 08:00,2013-02-23 16:00,,2012-11-25 08:00,2013-02-23 16:00,,PT_Normal,,,,,uRdh+gJ84UC/llurY7Tbpg,sdcBHYglTkmbL+zUfSnz1Q,,,Y,0,0,,,2012-06-20 10:12,2012-06-20 10:12,admin,admin
1031,145754,5115,23021,5686,1,0,N,N,N,CP_Drtn,TT_Task,DT_FixedDUR2,RV_OK,TK_NotStart,TSF013,Equipment Erection on Below Production Level,,24,24,56,0,0,0,56,0,0,0,,,,2012-11-01 08:00,2012-11-08 16:00,,2012-10-29 08:00,2012-11-05 16:00,2012-10-29 08:00,2012-11-05 16:00,2012-10-29 08:00,2012-11-05 16:00,,2012-11-01 08:00,2012-11-08 16:00,,PT_Normal,,,,,deQxXyKJykWyosIrjOzPxQ,z1CTK+RVT2ODKyZP+ZU/NQ,,,N,0,0,,,2012-06-20 10:12,2012-06-20 10:12,admin,admin
1032,145755,5115,23021,5686,1,0,N,N,N,CP_Drtn,TT_Task,DT_FixedDUR2,RV_OK,TK_NotStart,TSF014,Equipment Erection on Production Level,,216,216,120,0,0,0,120,0,0,0,,,,2012-12-30 08:00,2013-01-16 16:00,,2012-11-28 08:00,2012-12-15 16:00,2012-11-28 08:00,2012-12-15 16:00,2012-11-28 08:00,2012-12-15 16:00,,2012-12-30 08:00,2013-01-16 16:00,,PT_Normal,,,,,Pnvo608ta0uPVxryfFvT3Q,uRd8e2PwTCikyeTQ2cwlXg,,,N,0,0,,,2012-06-20 10:12,2012-06-20 10:12,admin,admin
1033,145756,5115,23021,5686,1,0,N,N,N,CP_Drtn,TT_Task,DT_FixedDUR2,RV_OK,TK_NotStart,TSF015,Equipment Erection on Helideck,,400,400,56,0,0,0,56,0,0,0,,,,2013-02-16 08:00,2013-02-23 16:00,,2012-12-16 08:00,2012-12-23 16:00,2012-12-16 08:00,2012-12-23 16:00,2012-12-16 08:00,2012-12-23 16:00,,2013-02-16 08:00,2013-02-23 16:00,,PT_Normal,,,,,qJyTP5mgVUOTVbCVhrIoZQ,aPJaRDLhRCS2fQT2L4W4XQ,,,N,0,0,,,2012-06-20 10:12,2012-06-20 10:12,admin,admin
1034,145757,5115,23022,5686,1,0,N,N,N,CP_Drtn,TT_Task,DT_FixedDUR2,RV_OK,TK_NotStart,TS17,E&I Activity,,16,16,720,0,0,0,720,0,0,0,,,,2012-11-12 08:00,2013-02-28 16:00,,2012-11-10 08:00,2013-02-26 16:00,2012-11-10 08:00,2013-02-26 16:00,2012-11-10 08:00,2013-02-26 16:00,,2012-11-12 08:00,2013-02-28 16:00,,PT_Normal,,,,,PbceoHkPrUyswUH44+7Y0g,wsdfJJRZTh6vVDGXiSaIkQ,,,N,0,0,,,2012-06-20 10:12,2012-06-20 10:12,admin,admin
1035,145758,5115,23023,5686,1,0,N,N,N,CP_Drtn,TT_Task,DT_FixedDUR2,RV_OK,TK_NotStart,TS18,"Pre-commissioning """" Piping Hydrotest , Reinstatment , Megering , Continuity Test and Touch Up """"",,0,0,280,0,0,0,280,0,0,0,,,,2013-02-18 08:00,2013-03-30 16:00,,2013-02-18 08:00,2013-03-30 16:00,2013-02-18 08:00,2013-03-30 16:00,2013-02-18 08:00,2013-03-30 16:00,,2013-02-18 08:00,2013-03-30 16:00,,PT_Normal,,,,,VWWywdlJ9Eyka5Ife5PzMQ,lPjrgJbBSWyVdJYtkd0lWQ,,,Y,0,0,,,2012-06-20 10:12,2012-06-20 10:12,admin,admin
1036,145759,5115,22994,5686,1,0,N,N,N,CP_Drtn,TT_Task,DT_FixedDUR2,RV_OK,TK_NotStart,PL11,P/L Spools Fabrication,,832,0,720,0,0,0,720,0,0,0,,,,2012-11-07 08:00,2013-02-24 16:00,,2012-06-30 08:00,2012-10-17 16:00,2012-06-30 08:00,2012-10-17 16:00,2012-06-30 08:00,2012-10-17 16:00,,2012-11-07 08:00,2013-02-24 16:00,,PT_Normal,,,,,6xV4FuhBZE+KbFVgAFbftw,HLJPh8QQQuqRB3kePFiOKw,,,N,0,0,,,2012-06-20 10:12,2012-06-20 10:12,admin,admin
1037,145760,5115,22996,5686,0,0,N,N,N,CP_Drtn,TT_Mile,DT_FixedDrtn,RV_OK,TK_NotStart,LOPS51,Arrival of 01st Shipment Material Barge ( P/L Spools),,0,128,0,0,0,0,0,0,0,0,2012-09-15 08:00,,,2012-09-15 08:00,2012-09-15 08:00,,2012-09-15 08:00,2012-09-15 08:00,2012-09-15 08:00,2012-09-15 08:00,2012-09-15 08:00,2012-09-15 08:00,,2012-09-15 08:00,2012-09-15 08:00,CS_MSO,PT_Normal,,,,,11o2H9txbkGZa+pUq9vesg,B4Hx/kkxQZKPJEG8DiZMqQ,,,N,0,0,,,2012-06-20 10:12,2012-06-20 10:12,admin,admin
1038,145761,5115,22996,5686,1,0,N,N,N,CP_Drtn,TT_Task,DT_FixedDUR2,RV_OK,TK_NotStart,LOPS52,1st Shipment Material Barge Preparation,,1088,0,96,0,0,0,96,0,0,0,,,,2013-03-20 08:00,2013-04-02 16:00,,2012-10-03 08:00,2012-10-17 16:00,2012-10-03 08:00,2012-10-17 16:00,2012-10-03 08:00,2012-10-17 16:00,,2013-03-20 08:00,2013-04-02 16:00,,PT_Normal,,,,,bx30455DpE6/u3Qfw4JbOw,ffJmeitJThGKpY3WVSZDNQ,,,N,0,0,,,2012-06-20 10:12,2012-06-20 10:12,admin,admin
1039,145762,5115,22996,5686,1,0,N,N,N,CP_Drtn,TT_Task,DT_FixedDUR2,RV_OK,TK_NotStart,LOPS53,"L/O & Sea Fastening (P/L Spools 18"""" & 8"""")",,1088,0,32,0,0,0,32,0,0,0,,,,2013-04-03 08:00,2013-04-07 16:00,,2012-10-18 08:00,2012-10-22 16:00,2012-10-18 08:00,2012-10-22 16:00,2012-10-18 08:00,2012-10-22 16:00,,2013-04-03 08:00,2013-04-07 16:00,,PT_Normal,,,,,k+XzoDdNBkytS3uq14PxXQ,0IwOiWOuTGWgp9eZJV76QQ,,,N,0,0,,,2012-06-20 10:12,2012-06-20 10:12,admin,admin
1040,145763,5115,22997,5686,0,0,N,N,N,CP_Drtn,TT_Mile,DT_FixedDrtn,RV_OK,TK_NotStart,LOJK51,Arrival of 02nd Shipment Material Barge ( Jacket and Piles ),,0,263.983333,0,0,0,0,0,0,0,0,2012-12-01 08:01,,,2012-12-01 08:01,2012-12-01 08:01,,2012-12-01 08:01,2012-12-01 08:01,2012-12-01 08:01,2012-12-01 08:01,2012-12-01 08:01,2012-12-01 08:01,,2012-12-01 08:01,2012-12-01 08:01,CS_MSO,PT_Normal,,,,,WYjxCz7HcEmdQ4q0puB4Og,TZSnzFwbTP2WYUW5WMHAXA,,,N,0,0,,,2012-06-20 10:12,2012-06-20 10:12,admin,admin
1041,145764,5115,22997,5686,1,0,N,N,N,CP_Drtn,TT_Task,DT_FixedDUR2,RV_OK,TK_NotStart,LOJK52,02nd Shipment Material Barge Preparation,,208,0,96,0,0,0,96,0,0,0,,,,2013-02-11 08:00,2013-02-24 16:00,,2013-01-09 08:00,2013-01-22 16:00,2013-01-09 08:00,2013-01-22 16:00,2013-01-09 08:00,2013-01-22 16:00,,2013-02-11 08:00,2013-02-24 16:00,,PT_Normal,,,,,aa2ujpPQZka8v4DCk9zKUw,XbtAi6jCTDyBXVHSpw5OSQ,,,N,0,0,,,2012-06-20 10:12,2012-06-20 10:12,admin,admin
1042,145765,5115,22997,5686,1,0,N,N,N,CP_Drtn,TT_Task,DT_FixedDUR2,RV_OK,TK_NotStart,LOJK53,L/O & Sea fastening ( Jacket & Piles ),,208,0,56,0,0,0,56,0,0,0,,,,2013-02-25 08:00,2013-03-04 16:00,,2013-01-23 08:00,2013-01-31 16:00,2013-01-23 08:00,2013-01-31 16:00,2013-01-23 08:00,2013-01-31 16:00,,2013-02-25 08:00,2013-03-04 16:00,,PT_Normal,,,,,/dLBwvE+RUWpMu/MrGNMrw,0h5qrf7kSZW3DGU5wFjrDw,,,N,0,0,,,2012-06-20 10:12,2012-06-20 10:12,admin,admin
1043,145766,5115,22993,5686,0,0,N,N,N,CP_Drtn,TT_Mile,DT_FixedDrtn,RV_OK,TK_NotStart,LODK51,Arrival of 03rd Shipment Material Barge ( Deck C/W TSF ),,-0.016667,104,0,0,0,0,0,0,0,0,2013-03-01 08:01,,,2013-02-28 15:59,2013-02-28 15:59,,2013-03-02 08:00,2013-03-02 08:00,2013-03-02 08:00,2013-03-02 08:00,2013-03-02 08:00,2013-03-02 08:00,,2013-02-28 15:59,2013-02-28 15:59,CS_MSO,PT_Normal,,,,,fupi/b0VhUWPYX0QqbBdwA,ExIEDAbgRLSmFck0X+OxYg,,,N,0,0,,,2012-06-20 10:12,2012-06-20 10:12,admin,admin
1044,145767,5115,22993,5686,1,0,N,N,N,CP_Drtn,TT_Task,DT_FixedDUR2,RV_OK,TK_NotStart,LODK52,3rd Shipment Material Barge Preparation,,0,0,96,0,0,0,96,0,0,0,,,,2013-03-17 08:00,2013-03-30 16:00,,2013-03-17 08:00,2013-03-30 16:00,2013-03-17 08:00,2013-03-30 16:00,2013-03-17 08:00,2013-03-30 16:00,,2013-03-17 08:00,2013-03-30 16:00,,PT_Normal,,,,,f4RRhvLSh0GRtpromCpmew,lPDdUYuUTIydlmlcan93BQ,,,Y,0,0,,,2012-06-20 10:12,2012-06-20 10:12,admin,admin
1045,145768,5115,22993,5686,1,0,N,N,N,CP_Drtn,TT_Task,DT_FixedDUR2,RV_OK,TK_NotStart,LODK53,L/O & Sea fastening ( Deck),,0,0,56,0,0,0,56,0,0,0,,,,2013-03-31 08:00,2013-04-07 16:00,,2013-03-31 08:00,2013-04-07 16:00,2013-03-31 08:00,2013-04-07 16:00,2013-03-31 08:00,2013-04-07 16:00,,2013-03-31 08:00,2013-04-07 16:00,,PT_Normal,,,,,AsroX53ACkuT+lOq7aFyjg,a29m8wZtSbmmAh/FPoIQAw,,,Y,0,0,,,2012-06-20 10:12,2012-06-20 10:12,admin,admin
1046,145769,5115,22986,794,1,0,N,N,N,CP_Drtn,TT_Task,DT_FixedDrtn,RV_OK,TK_NotStart,PRP32,"Pipeline 8"""" & Fittings",,-0.016667,2087,408,0,0,0,408,0,0,0,2012-05-30 17:00,,,2012-05-30 16:59,2012-07-20 16:59,,2012-05-31 08:00,2012-07-20 17:00,2012-05-31 08:00,2012-07-20 17:00,2012-05-31 08:00,2012-07-20 17:00,,2012-05-30 16:59,2012-07-20 16:59,CS_MSO,PT_Normal,,,,,DAnnnaFMwUCyM0PpJ7fI6g,tjm2mx2cUUyxd/Z8deMfQA,,,N,0,0,,,2012-06-20 10:12,2012-06-20 10:12,admin,admin
1047,145770,5115,22974,5686,0,0,N,N,N,CP_Drtn,TT_FinMile,DT_FixedDrtn,RV_OK,TK_NotStart,GM21,Reciving Fax of Award,,-0.016667,0,0,0,0,0,0,0,0,0,2012-01-20 16:00,,,2012-01-19 16:00,2012-01-19 16:00,,2012-01-21 08:01,2012-01-21 08:01,2012-01-21 08:01,2012-01-21 08:01,2012-01-21 08:01,2012-01-21 08:01,,2012-01-19 16:00,2012-01-19 16:00,CS_MEO,PT_Normal,,,,,eWSnriP+OkKzBYUnuhqwbw,mAYBql7WQzuUeAh5RGjavw,,,N,0,0,,,2012-06-20 10:14,2012-06-20 10:14,admin,admin
1048,145771,5115,22974,5686,0,0,N,N,N,CP_Drtn,TT_Mile,DT_FixedDrtn,RV_OK,TK_NotStart,GM22,Project Fab. Start,,1951.983333,1952,0,0,0,0,0,0,0,0,,,,2013-04-07 15:59,2013-04-07 15:59,,2012-06-13 08:00,2012-06-13 08:00,2012-06-13 08:00,2012-06-13 08:00,2012-06-13 08:00,2012-06-13 08:00,,2013-04-07 15:59,2013-04-07 15:59,,PT_Normal,,,,,Qfd2oeBlFEWyv/w/4gaLLg,MUGR7HsxSCatq1Lsy+yI2A,,,N,0,0,,,2012-06-20 10:14,2012-06-20 10:14,admin,admin
1049,145772,5115,22974,5686,0,0,N,N,N,CP_Drtn,TT_Mile,DT_FixedDrtn,RV_OK,TK_NotStart,GM24,Ready for Load out ( 02nd Shipment/ Jacket & Piles ),,208,208,0,0,0,0,0,0,0,0,,,,2013-02-25 08:00,2013-02-25 08:00,,2013-01-23 08:00,2013-01-23 08:00,2013-01-23 08:00,2013-01-23 08:00,2013-01-23 08:00,2013-01-23 08:00,,2013-02-25 08:00,2013-02-25 08:00,,PT_Normal,,,,,eoQvjwCymUSwm4sG9f0v3Q,oEdGu9OnQ0CgAkVlSv8iuw,,,N,0,0,,,2012-06-20 10:14,2012-06-20 10:14,admin,admin
1050,145773,5115,22974,5686,0,0,N,N,N,CP_Drtn,TT_Mile,DT_FixedDrtn,RV_OK,TK_NotStart,GM25,Ready for Load out ( 03rd Shipment/ Deck C/W TSF ),,55.983333,56,0,0,0,0,0,0,0,0,,,,2013-04-07 15:59,2013-04-07 15:59,,2013-03-31 08:00,2013-03-31 08:00,2013-03-31 08:00,2013-03-31 08:00,2013-03-31 08:00,2013-03-31 08:00,,2013-04-07 15:59,2013-04-07 15:59,,PT_Normal,,,,,YGD9FEfmV02e15Oh9huiZg,h7hpizZeQXG79P6YGic48A,,,N,0,0,,,2012-06-20 10:14,2012-06-20 10:14,admin,admin
1051,145774,5115,22974,5686,0,0,N,N,N,CP_Drtn,TT_Mile,DT_FixedDrtn,RV_OK,TK_NotStart,GM23,"Ready for Load out (01st Shipment / Pipeline Spools 18"""" & 8"""")",,1119.983333,1120,0,0,0,0,0,0,0,0,,,,2013-04-07 15:59,2013-04-07 15:59,,2012-10-18 08:00,2012-10-18 08:00,2012-10-18 08:00,2012-10-18 08:00,2012-10-18 08:00,2012-10-18 08:00,,2013-04-07 15:59,2013-04-07 15:59,,PT_Normal,,,,,qVvzT46D+Ey5hrRGqR7lMg,hwMqvqcnTaWjHD3UCB8GZQ,,,N,0,0,,,2012-06-20 10:14,2012-06-20 10:14,admin,admin
1052,145775,5115,22983,794,1,0,N,N,N,CP_Drtn,TT_Task,DT_FixedDrtn,RV_OK,TK_NotStart,ENS23,Receiving Jacket Primary & Secondary Steel IFC DWG`s,,0,0,1104,0,0,0,1104,0,0,0,2011-11-30 08:01,,,2011-11-30 08:01,2012-04-16 08:01,,2011-11-30 08:01,2012-04-16 08:01,2011-11-30 08:01,2012-04-16 08:01,2011-11-30 08:01,2012-04-16 08:01,,2011-11-30 08:01,2012-04-16 08:01,CS_MSO,PT_Normal,,,,,ttS1ntQSRU6sIzTpwJ1B4g,/taVGz7GStKxIdbmdm3JkA,,,N,0,0,,,2012-06-20 10:14,2012-06-20 10:14,admin,admin
1053,145776,5115,22983,794,0,0,N,N,N,CP_Drtn,TT_FinMile,DT_FixedDrtn,RV_OK,TK_NotStart,ENS24,Receiving Piles IFC DWG`s,,0,720,0,0,0,0,0,0,0,0,2012-01-17 08:01,,,2012-01-17 08:01,2012-01-17 08:01,,2012-01-17 08:01,2012-01-17 08:01,2012-01-17 08:01,2012-01-17 08:01,2012-01-17 08:01,2012-01-17 08:01,,2012-01-17 08:01,2012-01-17 08:01,CS_MEO,PT_Normal,,,,,GgztpWkIzE2AXaN2MN7xzA,Na3Aup6tShC+yRgy8OADFw,,,N,0,0,,,2012-06-20 10:14,2012-06-20 10:14,admin,admin
1054,145777,5115,22983,794,1,0,N,N,N,CP_Drtn,TT_Task,DT_FixedDUR2,RV_OK,TK_NotStart,ENS25,Receiving Deck Str. Primary & Secondary IFC DWG`s,,0,224,328,0,0,0,328,0,0,0,2012-02-07 08:01,,,2012-02-07 08:01,2012-03-19 08:01,,2012-02-07 08:01,2012-03-19 08:01,2012-02-07 08:01,2012-03-19 08:01,2012-02-07 08:01,2012-03-19 08:01,,2012-02-07 08:01,2012-03-19 08:01,CS_MSO,PT_Normal,,,,,qk66aoE8q0u2nJwmyn86hQ,fi7weAl5SEGTR2lLUeKx/w,,,N,0,0,,,2012-06-20 10:14,2012-06-20 10:14,admin,admin
1055,145778,5115,22983,794,0,0,N,N,N,CP_Drtn,TT_FinMile,DT_FixedDrtn,RV_OK,TK_NotStart,ENS21,"Receiving Final Jacket , Boat Land & Piles MTO",,135.983333,135.983333,0,0,0,0,0,0,0,0,,,,2012-02-14 17:00,2012-02-14 17:00,,2012-01-29 08:01,2012-01-29 08:01,2012-01-29 08:01,2012-01-29 08:01,2012-01-29 08:01,2012-01-29 08:01,,2012-02-14 17:00,2012-02-14 17:00,,PT_Normal,,,,,K70RdvqHWUC1Q+/O5UNB4Q,TPEjRmwKRrq6hsy6oKat/g,,,N,0,0,,,2012-06-20 10:14,2012-06-20 10:14,admin,admin
1056,145779,5115,22983,794,0,0,N,N,N,CP_Drtn,TT_FinMile,DT_FixedDrtn,RV_OK,TK_NotStart,ENS22,Receiving Final Deck Str. MTO,,135.983333,135.983333,0,0,0,0,0,0,0,0,,,,2012-02-14 17:00,2012-02-14 17:00,,2012-01-29 08:01,2012-01-29 08:01,2012-01-29 08:01,2012-01-29 08:01,2012-01-29 08:01,2012-01-29 08:01,,2012-02-14 17:00,2012-02-14 17:00,,PT_Normal,,,,,fbh6eCjSfUG2nf0WD57Kew,6nkSfB2oQqWjhNUPP6KgpA,,,N,0,0,,,2012-06-20 10:14,2012-06-20 10:14,admin,admin
1057,145780,5115,22983,794,1,0,N,N,N,CP_Drtn,TT_Task,DT_FixedDrtn,RV_OK,TK_NotStart,ENS28,Receiving IFC Equipment fixation DWG`s,,0,1559.983333,104,0,0,0,104,0,0,0,2012-04-04 08:01,,,2012-04-04 08:01,2012-04-17 08:01,,2012-04-04 08:01,2012-04-17 08:01,2012-04-04 08:01,2012-04-17 08:01,2012-04-04 08:01,2012-04-17 08:01,,2012-04-04 08:01,2012-04-17 08:01,CS_MSO,PT_Normal,,,,,VzB0HX7q9kKrEE0Pax3+YA,mm1mBipHSJKSJiX6ECgsuA,,,N,0,0,,,2012-06-20 10:14,2012-06-20 10:14,admin,admin
1058,145781,5115,22983,794,1,0,N,N,N,CP_Drtn,TT_Task,DT_FixedDUR2,RV_OK,TK_NotStart,ENS26,Receiving Piping Supports IFC DWG's,,0,3078.983333,160,0,0,0,160,0,0,0,2012-02-28 08:01,,,2012-02-28 08:01,2012-03-19 08:01,,2012-02-28 08:01,2012-03-19 08:01,2012-02-28 08:01,2012-03-19 08:01,2012-02-28 08:01,2012-03-19 08:01,,2012-02-28 08:01,2012-03-19 08:01,CS_MSO,PT_Normal,,,,,pqaeZ20B00Csn0a73Vwu0A,00Owhd0XR8uvJLKhPzMELA,,,N,0,0,,,2012-06-20 10:14,2012-06-20 10:14,admin,admin
1059,145782,5115,22983,794,1,0,N,N,N,CP_Drtn,TT_Task,DT_FixedDUR2,RV_OK,TK_NotStart,ENS27,Receiving Cable tarys Support IFC DWG's,,0,3022.983333,104,0,0,0,104,0,0,0,2012-03-13 08:01,,,2012-03-13 08:01,2012-03-26 08:01,,2012-03-13 08:01,2012-03-26 08:01,2012-03-13 08:01,2012-03-26 08:01,2012-03-13 08:01,2012-03-26 08:01,,2012-03-13 08:01,2012-03-26 08:01,CS_MSO,PT_Normal,,,,,lcZg6YimFUujKUdl1CpDRg,JPgGdggzREiAYSQ7vnqU2w,,,N,0,0,,,2012-06-20 10:14,2012-06-20 10:14,admin,admin
1060,145783,5115,22983,794,1,0,N,N,N,CP_Drtn,TT_Task,DT_FixedDrtn,RV_OK,TK_NotStart,ENS29,"Receiving P/L 8"""" & 18"""" IFC DWG's",,0,2736,160,0,0,0,160,0,0,0,2012-04-10 16:00,,,2012-04-10 16:00,2012-04-30 16:00,,2012-04-10 16:00,2012-04-30 16:00,2012-04-10 16:00,2012-04-30 16:00,2012-04-10 16:00,2012-04-30 16:00,,2012-04-10 16:00,2012-04-30 16:00,CS_MSO,PT_Normal,,,,,ujy3UJd/k0uKl53ushVSiA,98Xxuu9fQZixtpBjPwMmlQ,,,N,0,0,,,2012-06-20 10:14,2012-06-20 10:14,admin,admin
1061,145784,5115,22981,794,1,0,N,N,N,CP_Drtn,TT_Task,DT_FixedDrtn,RV_OK,TK_NotStart,ENT23,Receiving Piping ISO`s IFC DWG's,,0,1047.983333,112,0,0,0,112,0,0,0,2012-02-27 08:01,,,2012-02-27 08:01,2012-03-12 08:01,,2012-02-27 08:01,2012-03-12 08:01,2012-02-27 08:01,2012-03-12 08:01,2012-02-27 08:01,2012-03-12 08:01,,2012-02-27 08:01,2012-03-12 08:01,CS_MSO,PT_Normal,,,,,nX8Cmklx3ki59lATq9g6TA,enOOp99+SsqEvqB5hnSgoA,,,N,0,0,,,2012-06-20 10:14,2012-06-20 10:14,admin,admin
1062,145785,5115,22981,794,0,0,N,N,N,CP_Drtn,TT_FinMile,DT_FixedDrtn,RV_OK,TK_NotStart,ENT21,Issue Approved P&ID's / Equipment List IFC DWG's,,0,3584,0,0,0,0,0,0,0,0,2012-01-15 16:00,,,2012-01-15 16:00,2012-01-15 16:00,,2012-01-15 16:00,2012-01-15 16:00,2012-01-15 16:00,2012-01-15 16:00,2012-01-15 16:00,2012-01-15 16:00,,2012-01-15 16:00,2012-01-15 16:00,CS_MEO,PT_Normal,,,,,2YAs4lt8CESiEpcIOAG3mA,93sGNlW6QoCv/1ksHG2NzA,,,N,0,0,,,2012-06-20 10:14,2012-06-20 10:14,admin,admin
1063,145786,5115,22981,794,0,0,N,N,N,CP_Drtn,TT_FinMile,DT_FixedDrtn,RV_OK,TK_NotStart,ENT22,Issue plat plans IFC DWG's,,0,3408,0,0,0,0,0,0,0,0,2012-02-06 16:00,,,2012-02-06 16:00,2012-02-06 16:00,,2012-02-06 16:00,2012-02-06 16:00,2012-02-06 16:00,2012-02-06 16:00,2012-02-06 16:00,2012-02-06 16:00,,2012-02-06 16:00,2012-02-06 16:00,CS_MEO,PT_Normal,,,,,7FUXBR6/jUmWOSVKj10oKw,FmX28kBFQpGSXexVmL7Wlw,,,N,0,0,,,2012-06-20 10:14,2012-06-20 10:14,admin,admin
1064,145787,5115,22981,5686,0,0,N,N,N,CP_Drtn,TT_FinMile,DT_FixedDrtn,RV_OK,TK_NotStart,ENT24,Issue Hydrotest maps & loops IFC DWG's,,0,2648,0,0,0,0,0,0,0,0,2012-02-28 16:00,,,2012-02-28 16:00,2012-02-28 16:00,,2012-02-28 16:00,2012-02-28 16:00,2012-02-28 16:00,2012-02-28 16:00,2012-02-28 16:00,2012-02-28 16:00,,2012-02-28 16:00,2012-02-28 16:00,CS_MEO,PT_Normal,,,,,VtUtCNXSWUWizSNwMNiVMg,5DGNq1VSTqKaHuj3eSEIjw,,,N,0,0,,,2012-06-20 10:14,2012-06-20 10:14,admin,admin
1065,145788,5115,22982,794,1,0,N,N,N,CP_Drtn,TT_Task,DT_FixedDUR2,RV_OK,TK_NotStart,ENE21,Receiving E&I IFC DWG`s,,0,2279.983333,776,0,0,0,776,0,0,0,2012-01-23 08:01,,,2012-01-23 08:01,2012-04-29 08:01,,2012-01-23 08:01,2012-04-29 08:01,2012-01-23 08:01,2012-04-29 08:01,2012-01-23 08:01,2012-04-29 08:01,,2012-01-23 08:01,2012-04-29 08:01,CS_MSO,PT_Normal,,,,,XA9NfsnrBkO9xknlz8V2AQ,3Z6l8wXrS6642p/eM8yB1A,,,N,0,0,,,2012-06-20 10:14,2012-06-20 10:14,admin,admin
1066,145789,5115,22977,5686,1,0,N,N,N,CP_Drtn,TT_Task,DT_FixedDUR2,RV_OK,TK_NotStart,PF21,Pre-Fabrication of Steel Structure ( Jacket & Piles),,208,0,960,0,0,0,960,0,0,0,,,,2012-07-14 08:00,2012-12-10 16:00,,2012-06-13 08:00,2012-11-08 16:00,2012-06-13 08:00,2012-11-08 16:00,2012-06-13 08:00,2012-11-08 16:00,,2012-07-14 08:00,2012-12-10 16:00,,PT_Normal,,,,,OTFMivQfzUSSeQQ8E57KVw,BUUxQXUKQcKvFYRqrGtbRg,,,N,0,0,,,2012-06-20 10:14,2012-06-20 10:14,admin,admin
1067,145790,5115,22995,794,1,0,N,N,N,CP_Drtn,TT_Task,DT_FixedDUR2,RV_OK,TK_NotStart,PRT41,Piping Bulk material 1st batch,,-0.016667,536,240,0,0,0,240,0,0,0,2012-05-07 17:00,,,2012-05-07 16:59,2012-06-06 16:59,,2012-05-08 08:00,2012-06-06 17:00,2012-05-08 08:00,2012-06-06 17:00,2012-05-08 08:00,2012-06-06 17:00,,2012-05-07 16:59,2012-06-06 16:59,CS_MSO,PT_Normal,,,,,R/gl89JB5EyGPmEmoX56eA,DqLN36xRQY+kZsfpyGsU9w,,,N,0,0,,,2012-06-20 10:14,2012-06-20 10:14,admin,admin
1068,145791,5115,22995,794,1,0,N,N,N,CP_Drtn,TT_Task,DT_FixedDUR2,RV_OK,TK_NotStart,PRT42,Piping Bulk material 2nd batch,,-0.016667,855,240,0,0,0,240,0,0,0,2012-06-10 17:00,,,2012-06-10 16:59,2012-07-10 16:59,,2012-06-11 08:00,2012-07-10 17:00,2012-06-11 08:00,2012-07-10 17:00,2012-06-11 08:00,2012-07-10 17:00,,2012-06-10 16:59,2012-07-10 16:59,CS_MSO,PT_Normal,,,,,1P7ORn2LfEqj6z7MR85+1w,fRmh57i3SamJM0o1p2/3vA,,,N,0,0,,,2012-06-20 10:14,2012-06-20 10:14,admin,admin
1069,145792,5115,22995,794,1,0,N,N,N,CP_Drtn,TT_Task,DT_FixedDUR2,RV_OK,TK_NotStart,PRT23,Piping Valves Bulk material 1st batch,,-0.016667,999,112,0,0,0,112,0,0,0,2012-06-23 17:00,,,2012-06-23 16:59,2012-07-07 16:59,,2012-06-24 08:00,2012-07-07 17:00,2012-06-24 08:00,2012-07-07 17:00,2012-06-24 08:00,2012-07-07 17:00,,2012-06-23 16:59,2012-07-07 16:59,CS_MSO,PT_Normal,,,,,4viMxarKgEysBAvpsv0wNA,7wg9/w/MQ7a7zI20+pTM+A,,,N,0,0,,,2012-06-20 10:14,2012-06-20 10:14,admin,admin
1070,145793,5115,22995,794,1,0,N,N,N,CP_Drtn,TT_Task,DT_FixedDUR2,RV_OK,TK_NotStart,PRT24,Piping valves Bulk material 2nd batch,,-0.016667,767,112,0,0,0,112,0,0,0,2012-07-22 17:00,,,2012-07-22 16:59,2012-08-05 16:59,,2012-07-23 08:00,2012-08-05 17:00,2012-07-23 08:00,2012-08-05 17:00,2012-07-23 08:00,2012-08-05 17:00,,2012-07-22 16:59,2012-08-05 16:59,CS_MSO,PT_Normal,,,,,5NS1gOfAFkCJ4iFcgwga+A,iGFfO+XNTpqt+16+eOx2EA,,,N,0,0,,,2012-06-20 10:14,2012-06-20 10:14,admin,admin
1071,145794,5115,22995,794,1,0,N,N,N,CP_Drtn,TT_Task,DT_FixedDUR2,RV_OK,TK_NotStart,PRT25,Flanges,,-0.016667,8,360,0,0,0,360,0,0,0,2012-07-13 17:00,,,2012-07-13 16:59,2012-08-27 16:59,,2012-07-14 08:00,2012-08-27 17:00,2012-07-14 08:00,2012-08-27 17:00,2012-07-14 08:00,2012-08-27 17:00,,2012-07-13 16:59,2012-08-27 16:59,CS_MSO,PT_Normal,,,,,INJkuCsngkyWL2I1G3uAVQ,VAq1SSMERrmj1gqIqoQiTg,,,N,0,0,,,2012-06-20 10:14,2012-06-20 10:14,admin,admin
1072,145795,5115,22995,794,1,0,N,N,N,CP_Drtn,TT_Task,DT_FixedDUR2,RV_OK,TK_NotStart,PRT26,Pressure Safety Valve,,-0.016667,1519,352,0,0,0,352,0,0,0,2012-06-04 17:00,,,2012-06-04 16:59,2012-07-18 16:59,,2012-06-05 08:00,2012-07-18 17:00,2012-06-05 08:00,2012-07-18 17:00,2012-06-05 08:00,2012-07-18 17:00,,2012-06-04 16:59,2012-07-18 16:59,CS_MSO,PT_Normal,,,,,wY5y/SkVckGn93JRJgwGTw,+SvOOjbVT6SM2f4LWOHEpg,,,N,0,0,,,2012-06-20 10:14,2012-06-20 10:14,admin,admin
1073,145796,5115,22995,794,1,0,N,N,N,CP_Drtn,TT_Task,DT_FixedDUR2,RV_OK,TK_NotStart,PRT27,Pressure regulator Valve,,-0.016667,1231,240,0,0,0,240,0,0,0,2012-07-24 17:00,,,2012-07-24 16:59,2012-08-23 16:59,,2012-07-25 08:00,2012-08-23 17:00,2012-07-25 08:00,2012-08-23 17:00,2012-07-25 08:00,2012-08-23 17:00,,2012-07-24 16:59,2012-08-23 16:59,CS_MSO,PT_Normal,,,,,nCC7dEXF/kKdO+PeGbJHYg,FkVucARhQlCiyikicegBhQ,,,N,0,0,,,2012-06-20 10:14,2012-06-20 10:14,admin,admin
1074,145797,5115,22995,794,1,0,N,N,N,CP_Drtn,TT_Task,DT_FixedDUR2,RV_OK,TK_NotStart,PRT28,Shutdown Valve,,-0.016667,1135,248,0,0,0,248,0,0,0,2012-08-04 17:00,,,2012-08-04 16:59,2012-09-04 16:59,,2012-08-05 08:00,2012-09-04 17:00,2012-08-05 08:00,2012-09-04 17:00,2012-08-05 08:00,2012-09-04 17:00,,2012-08-04 16:59,2012-09-04 16:59,CS_MSO,PT_Normal,,,,,5+rd3mjKH02oLu6q3DIjUA,GViNUzKNR0i8XYjXx02J5Q,,,N,0,0,,,2012-06-20 10:14,2012-06-20 10:14,admin,admin
1075,145798,5115,22984,794,1,0,N,N,N,CP_Drtn,TT_Task,DT_FixedDUR2,RV_OK,TK_NotStart,PRT29,Chemical Injection PKG.,,-0.016667,1264,360,0,0,0,360,0,0,0,2012-05-08 17:00,,,2012-05-08 16:59,2012-06-22 16:59,,2012-05-09 08:00,2012-06-22 17:00,2012-05-09 08:00,2012-06-22 17:00,2012-05-09 08:00,2012-06-22 17:00,,2012-05-08 16:59,2012-06-22 16:59,CS_MSO,PT_Normal,,,,,wDkUruHrk0GISs25JdUsIQ,eKvs6VRWSyOb6HNtkF9+AA,,,N,0,0,,,2012-06-20 10:14,2012-06-20 10:14,admin,admin
1076,145799,5115,22984,794,1,0,N,N,N,CP_Drtn,TT_Task,DT_FixedDUR2,RV_OK,TK_NotStart,PRT30,Launcher recivier,,-0.016667,960,360,0,0,0,360,0,0,0,2012-06-15 17:00,,,2012-06-15 16:59,2012-07-30 16:59,,2012-06-16 08:00,2012-07-30 17:00,2012-06-16 08:00,2012-07-30 17:00,2012-06-16 08:00,2012-07-30 17:00,,2012-06-15 16:59,2012-07-30 16:59,CS_MSO,PT_Normal,,,,,BTv6x2HpoUOjntMenVD9Nw,3IwzhhfhR3KgxUsvdJ6rqQ,,,N,0,0,,,2012-06-20 10:14,2012-06-20 10:14,admin,admin
1077,145800,5115,22984,794,1,0,N,N,N,CP_Drtn,TT_Task,DT_FixedDUR2,RV_OK,TK_NotStart,PRT51,Vent KOD,,-0.016667,864,360,0,0,0,360,0,0,0,2012-06-27 17:00,,,2012-06-27 16:59,2012-08-11 16:59,,2012-06-28 08:00,2012-08-11 17:00,2012-06-28 08:00,2012-08-11 17:00,2012-06-28 08:00,2012-08-11 17:00,,2012-06-27 16:59,2012-08-11 16:59,CS_MSO,PT_Normal,,,,,g0Gep7W4ikqfDWC76K3cgQ,V+De5pWvTHyHzJo6bSHRww,,,N,0,0,,,2012-06-20 10:14,2012-06-20 10:14,admin,admin
1078,145801,5115,22984,794,1,0,N,N,N,CP_Drtn,TT_Task,DT_FixedDUR2,RV_OK,TK_NotStart,PRT52,Open Drain Tank,,-0.016667,624,360,0,0,0,360,0,0,0,2012-06-27 17:00,,,2012-06-27 16:59,2012-08-11 16:59,,2012-06-28 08:00,2012-08-11 17:00,2012-06-28 08:00,2012-08-11 17:00,2012-06-28 08:00,2012-08-11 17:00,,2012-06-27 16:59,2012-08-11 16:59,CS_MSO,PT_Normal,,,,,4T4N5Cq6jkWznHErHLR90w,Dvo6DiXYTvSm95/lOoAUnw,,,N,0,0,,,2012-06-20 10:14,2012-06-20 10:14,admin,admin
1079,145802,5115,22985,794,1,0,N,N,N,CP_Drtn,TT_Task,DT_FixedDUR2,RV_OK,TK_NotStart,PRS23,Delivery of Structure Material (F.O.B - 13 Wks.) - (Gupco Responsability),,0,0,728,0,0,0,728,0,0,0,,,,2012-02-15 08:00,2012-05-15 17:00,,2012-02-15 08:00,2012-05-15 17:00,2012-02-15 08:00,2012-05-15 17:00,2012-02-15 08:00,2012-05-15 17:00,,2012-02-15 08:00,2012-05-15 17:00,,PT_Normal,,,,,YOa83KNa60Gl94zuWj7/lw,dmjGd5dtRyGQN7eIgjvWtA,,,Y,0,0,,,2012-06-20 10:14,2012-06-20 10:14,admin,admin
1080,145803,5115,22985,794,1,0,N,N,N,CP_Drtn,TT_Task,DT_FixedDUR2,RV_OK,TK_NotStart,PRS25,Material check with IFC DWG's to Prepare balance material,,1566.983333,0,56,0,0,0,56,0,0,0,,,,2012-10-28 16:00,2012-11-04 16:00,,2012-04-16 08:01,2012-04-23 08:01,2012-04-16 08:01,2012-04-23 08:01,2012-04-16 08:01,2012-04-23 08:01,,2012-10-28 16:00,2012-11-04 16:00,,PT_Normal,,,,,0eRUvAgtoEm6JI2myYO56w,TiJCnNvxQjGqD/lEVDLgtw,,,N,0,0,,,2012-06-20 10:14,2012-06-20 10:14,admin,admin
1081,145804,5115,22985,794,1,0,N,N,N,CP_Drtn,TT_Task,DT_FixedDUR2,RV_OK,TK_NotStart,PRS26,Delivery of balance material,,1566.983333,1566.983333,1232,0,0,0,1232,0,0,0,,,,2012-11-04 16:00,2013-04-07 16:00,,2012-04-23 08:01,2012-09-24 08:01,2012-04-23 08:01,2012-09-24 08:01,2012-04-23 08:01,2012-09-24 08:01,,2012-11-04 16:00,2013-04-07 16:00,,PT_Normal,,,,,iwe8AZk2L0CqrQHxHJrehw,oU6FnPOSQS+kCV/HY5y5yA,,,N,0,0,,,2012-06-20 10:14,2012-06-20 10:14,admin,admin
1082,145805,5115,22985,794,0,0,N,N,N,CP_Drtn,TT_Mile,DT_FixedDrtn,RV_OK,TK_NotStart,PRS21,Issue Structural Material P.O's ( Gupco Responsability),,0,64,0,0,0,0,0,0,0,0,2012-02-07 08:00,,,2012-02-07 08:00,2012-02-07 08:00,,2012-02-07 08:00,2012-02-07 08:00,2012-02-07 08:00,2012-02-07 08:00,2012-02-07 08:00,2012-02-07 08:00,,2012-02-07 08:00,2012-02-07 08:00,CS_MSO,PT_Normal,,,,,WZt06mZWsE+ONNqXXELV6Q,xF9X1iufT72bd1+OFKWOyQ,,,N,0,0,,,2012-06-20 10:14,2012-06-20 10:14,admin,admin
1083,145806,5115,22985,794,0,0,N,N,N,CP_Drtn,TT_Mile,DT_FixedDrtn,RV_OK,TK_NotStart,PRS22,Issue LC ( Gupco Responsability),,0,0,0,0,0,0,0,0,0,0,2012-02-15 08:00,,,2012-02-15 08:00,2012-02-15 08:00,,2012-02-15 08:00,2012-02-15 08:00,2012-02-15 08:00,2012-02-15 08:00,2012-02-15 08:00,2012-02-15 08:00,,2012-02-15 08:00,2012-02-15 08:00,CS_MSO,PT_Normal,,,,,/4iC7wvBSU2dT6H2pxcedA,um/v71UCSm2K8HwIWZ36mg,,,Y,0,0,,,2012-06-20 10:14,2012-06-20 10:14,admin,admin
1084,145807,5115,22985,794,1,0,N,N,N,CP_Drtn,TT_Task,DT_FixedDUR2,RV_OK,TK_NotStart,PRS24,Delivery of Structure Material at Site (4 Wks.),,0,0,224,0,0,0,224,0,0,0,,,,2012-05-16 08:00,2012-06-12 17:00,,2012-05-16 08:00,2012-06-12 17:00,2012-05-16 08:00,2012-06-12 17:00,2012-05-16 08:00,2012-06-12 17:00,,2012-05-16 08:00,2012-06-12 17:00,,PT_Normal,,,,,CIAK5Kw3fE+vZqSgYqbDEg,FqPfFJhLQ+SL9TfNEDcs7w,,,Y,0,0,,,2012-06-20 10:14,2012-06-20 10:14,admin,admin
1085,145808,5115,22986,794,1,0,N,N,N,CP_Drtn,TT_Task,DT_FixedDrtn,RV_OK,TK_NotStart,PRP21,"Pipeline 18"""" & Fittings",,0,0,408,0,0,0,408,0,0,0,2012-05-31 08:00,,,2012-05-31 08:00,2012-07-20 17:00,,2012-05-31 08:00,2012-07-20 17:00,2012-05-31 08:00,2012-07-20 17:00,2012-05-31 08:00,2012-07-20 17:00,,2012-05-31 08:00,2012-07-20 17:00,CS_MSO,PT_Normal,,,,,BEyJ2wpsVUuZYf/9d3678w,8zKzqtp8RUKmTAsXxykRFA,,,N,0,0,,,2012-06-20 10:14,2012-06-20 10:14,admin,admin
1086,145809,5115,22986,794,1,0,N,N,N,CP_Drtn,TT_Task,DT_FixedDrtn,RV_OK,TK_NotStart,PRP42,"Pipeline 8"""" & Fittings",,-0.016667,351,408,0,0,0,408,0,0,0,2012-05-30 17:00,,,2012-05-30 16:59,2012-07-20 16:59,,2012-05-31 08:00,2012-07-20 17:00,2012-05-31 08:00,2012-07-20 17:00,2012-05-31 08:00,2012-07-20 17:00,,2012-05-30 16:59,2012-07-20 16:59,CS_MSO,PT_Normal,,,,,Iau/FVxd0EOFcCosUZplkw,Z/LKROCTRSGDBSNh6tw23g,,,N,0,0,,,2012-06-20 10:14,2012-06-20 10:14,admin,admin
1087,145810,5115,23010,794,1,0,N,N,N,CP_Drtn,TT_Task,DT_FixedDUR2,RV_OK,TK_NotStart,PRE27,Radar system,,-0.016667,904,240,0,0,0,240,0,0,0,2012-06-19 17:00,,,2012-06-19 16:59,2012-07-19 16:59,,2012-06-20 08:00,2012-07-19 17:00,2012-06-20 08:00,2012-07-19 17:00,2012-06-20 08:00,2012-07-19 17:00,,2012-06-19 16:59,2012-07-19 16:59,CS_MSO,PT_Normal,,,,,DUhzolYfdU2qTiINAEpKmQ,fN9/pTqqS/2bIA0m5B7Ztw,,,N,0,0,,,2012-06-20 10:14,2012-06-20 10:14,admin,admin
1088,145811,5115,23010,794,1,0,N,N,N,CP_Drtn,TT_Task,DT_FixedDUR2,RV_OK,TK_NotStart,PRE28,Navegation Aids,,-0.016667,1384,360,0,0,0,360,0,0,0,2012-04-05 17:00,,,2012-04-05 16:59,2012-05-20 16:59,,2012-04-06 08:00,2012-05-20 17:00,2012-04-06 08:00,2012-05-20 17:00,2012-04-06 08:00,2012-05-20 17:00,,2012-04-05 16:59,2012-05-20 16:59,CS_MSO,PT_Normal,,,,,lF/RsA+8UU2LJ03ob53JPw,/agS5N51QBGq3ZFFA4yHkQ,,,N,0,0,,,2012-06-20 10:14,2012-06-20 10:14,admin,admin
1089,145812,5115,23006,794,1,0,N,N,N,CP_Drtn,TT_Task,DT_FixedDUR2,RV_OK,TK_NotStart,PRE41,Electrical Bulks,,-0.016667,512,360,0,0,0,360,0,0,0,2012-07-23 17:00,,,2012-07-23 16:59,2012-09-06 16:59,,2012-07-24 08:00,2012-09-06 17:00,2012-07-24 08:00,2012-09-06 17:00,2012-07-24 08:00,2012-09-06 17:00,,2012-07-23 16:59,2012-09-06 16:59,CS_MSO,PT_Normal,,,,,XtAu5I06fky97t8FhgfA8Q,vQ/i5SbETo6/zhp0lbrKxA,,,N,0,0,,,2012-06-20 10:14,2012-06-20 10:14,admin,admin
1090,145813,5115,23006,794,1,0,N,N,N,CP_Drtn,TT_Task,DT_FixedDUR2,RV_OK,TK_NotStart,PRE42,Cathodic Protection,,-0.016667,1000,360,0,0,0,360,0,0,0,2012-05-23 17:00,,,2012-05-23 16:59,2012-07-07 16:59,,2012-05-24 08:00,2012-07-07 17:00,2012-05-24 08:00,2012-07-07 17:00,2012-05-24 08:00,2012-07-07 17:00,,2012-05-23 16:59,2012-07-07 16:59,CS_MSO,PT_Normal,,,,,Wn8wqw4D60SyuXw46FCaqA,Iw4lArETRiW8xPu6VxnShg,,,N,0,0,,,2012-06-20 10:14,2012-06-20 10:14,admin,admin
1091,145814,5115,23006,794,1,0,N,N,N,CP_Drtn,TT_Task,DT_FixedDUR2,RV_OK,TK_NotStart,PRE43,Solar Power,,-0.016667,912,360,0,0,0,360,0,0,0,2012-06-03 17:00,,,2012-06-03 16:59,2012-07-18 16:59,,2012-06-04 08:00,2012-07-18 17:00,2012-06-04 08:00,2012-07-18 17:00,2012-06-04 08:00,2012-07-18 17:00,,2012-06-03 16:59,2012-07-18 16:59,CS_MSO,PT_Normal,,,,,vo+xX3+BJ02PH9Z1CnqQpA,VN0an5lGRoaFh0fMNvkkFA,,,N,0,0,,,2012-06-20 10:14,2012-06-20 10:14,admin,admin
1092,145815,5115,23007,794,1,0,N,N,N,CP_Drtn,TT_Task,DT_FixedDUR2,RV_OK,TK_NotStart,PRE24,F&G Detector,,-0.016667,648,360,0,0,0,360,0,0,0,2012-07-06 17:00,,,2012-07-06 16:59,2012-08-20 16:59,,2012-07-07 08:00,2012-08-20 17:00,2012-07-07 08:00,2012-08-20 17:00,2012-07-07 08:00,2012-08-20 17:00,,2012-07-06 16:59,2012-08-20 16:59,CS_MSO,PT_Normal,,,,,fk50iIABsEC3TSz8vBuwPw,VSwOK9yIRUSoxROQDvdw7g,,,N,0,0,,,2012-06-20 10:14,2012-06-20 10:14,admin,admin
1093,145816,5115,23007,794,1,0,N,N,N,CP_Drtn,TT_Task,DT_FixedDUR2,RV_OK,TK_NotStart,PRE25,Fire fighting system,,-0.016667,720,360,0,0,0,360,0,0,0,2012-06-27 17:00,,,2012-06-27 16:59,2012-08-11 16:59,,2012-06-28 08:00,2012-08-11 17:00,2012-06-28 08:00,2012-08-11 17:00,2012-06-28 08:00,2012-08-11 17:00,,2012-06-27 16:59,2012-08-11 16:59,CS_MSO,PT_Normal,,,,,e7UrSM4gH0OTRxaNxSxVPQ,tpzm+A81SOKv9OzobhMGlw,,,N,0,0,,,2012-06-20 10:14,2012-06-20 10:14,admin,admin
1094,145817,5115,23007,794,1,0,N,N,N,CP_Drtn,TT_Task,DT_FixedDUR2,RV_OK,TK_NotStart,PRE26,Life Saving Equipment,,-0.016667,664,360,0,0,0,360,0,0,0,2012-07-04 17:00,,,2012-07-04 16:59,2012-08-18 16:59,,2012-07-05 08:00,2012-08-18 17:00,2012-07-05 08:00,2012-08-18 17:00,2012-07-05 08:00,2012-08-18 17:00,,2012-07-04 16:59,2012-08-18 16:59,CS_MSO,PT_Normal,,,,,FKHGxM5YTkyxx0YEjauqjw,KFlMp1iuR7Ggn/R36j8DNg,,,N,0,0,,,2012-06-20 10:14,2012-06-20 10:14,admin,admin
1095,145818,5115,23008,794,1,0,N,N,N,CP_Drtn,TT_Task,DT_FixedDUR2,RV_OK,TK_NotStart,PRE29,Instrument Electical Bulk,,-0.016667,624,240,0,0,0,240,0,0,0,2012-07-24 17:00,,,2012-07-24 16:59,2012-08-23 16:59,,2012-07-25 08:00,2012-08-23 17:00,2012-07-25 08:00,2012-08-23 17:00,2012-07-25 08:00,2012-08-23 17:00,,2012-07-24 16:59,2012-08-23 16:59,CS_MSO,PT_Normal,,,,,Whel2T8VAEKV7TnrLofgLw,nbERwAGrT3emToa6M54rSw,,,N,0,0,,,2012-06-20 10:14,2012-06-20 10:14,admin,admin
1096,145819,5115,23008,794,1,0,N,N,N,CP_Drtn,TT_Task,DT_FixedDUR2,RV_OK,TK_NotStart,PRE30,Instrument Mechanical Bulk,,-0.016667,640,280,0,0,0,280,0,0,0,2012-07-17 17:00,,,2012-07-17 16:59,2012-08-21 16:59,,2012-07-18 08:00,2012-08-21 17:00,2012-07-18 08:00,2012-08-21 17:00,2012-07-18 08:00,2012-08-21 17:00,,2012-07-17 16:59,2012-08-21 16:59,CS_MSO,PT_Normal,,,,,MWenAoGEAE2Q+SJGhxxnoA,I5ckdTYuQTKukOCM1JedFw,,,N,0,0,,,2012-06-20 10:14,2012-06-20 10:14,admin,admin
1097,145820,5115,23008,794,1,0,N,N,N,CP_Drtn,TT_Task,DT_FixedDUR2,RV_OK,TK_NotStart,PRE51,Field Instrument,,-0.016667,760,360,0,0,0,360,0,0,0,2012-06-22 17:00,,,2012-06-22 16:59,2012-08-06 16:59,,2012-06-23 08:00,2012-08-06 17:00,2012-06-23 08:00,2012-08-06 17:00,2012-06-23 08:00,2012-08-06 17:00,,2012-06-22 16:59,2012-08-06 16:59,CS_MSO,PT_Normal,,,,,7RkThO5AcUqSnsZg6hr1bg,M/41QxsNRJS7+vZ1Rp7jJg,,,N,0,0,,,2012-06-20 10:14,2012-06-20 10:14,admin,admin
1098,145821,5115,23008,794,1,0,N,N,N,CP_Drtn,TT_Task,DT_FixedDUR2,RV_OK,TK_NotStart,PRE52,multi phase flow meter,,-0.016667,1095,456,0,0,0,456,0,0,0,2012-07-17 17:00,,,2012-07-17 16:59,2012-09-12 16:59,,2012-07-18 08:00,2012-09-12 17:00,2012-07-18 08:00,2012-09-12 17:00,2012-07-18 08:00,2012-09-12 17:00,,2012-07-17 16:59,2012-09-12 16:59,CS_MSO,PT_Normal,,,,,MrZeqRMbY0+O6dAWBGZU9Q,VbJvQNUwQvmr5G5TNU296w,,,N,0,0,,,2012-06-20 10:14,2012-06-20 10:14,admin,admin
1099,145822,5115,23008,794,1,0,N,N,N,CP_Drtn,TT_Task,DT_FixedDUR2,RV_OK,TK_NotStart,PRE53,Safe Guard system,,-0.016667,1063,240,0,0,0,240,0,0,0,2012-08-17 17:00,,,2012-08-17 16:59,2012-09-16 16:59,,2012-08-18 08:00,2012-09-16 17:00,2012-08-18 08:00,2012-09-16 17:00,2012-08-18 08:00,2012-09-16 17:00,,2012-08-17 16:59,2012-09-16 16:59,CS_MSO,PT_Normal,,,,,NJ6ZBW2O6k6gxZepPPaItg,jReSS16pSoan6pMZsdEk8g,,,N,0,0,,,2012-06-20 10:14,2012-06-20 10:14,admin,admin
1100,145823,5115,22991,5686,1,0,N,N,N,CP_Drtn,TT_Task,DT_FixedDUR2,RV_OK,TK_NotStart,JK21,"Jacket , Boat Landing Fabrication & Painting",,208,0,1400,0,0,0,1400,0,0,0,,,,2012-07-22 08:00,2013-02-24 16:00,,2012-06-21 08:00,2013-01-22 16:00,2012-06-21 08:00,2013-01-22 16:00,2012-06-21 08:00,2013-01-22 16:00,,2012-07-22 08:00,2013-02-24 16:00,,PT_Normal,,,,,VEuTy+EyDUOA4P4IEkrczQ,MJjexNjLRy6cxfkloFqepA,,,N,0,0,,,2012-06-20 10:14,2012-06-20 10:14,admin,admin
1101,145824,5115,22991,5686,1,0,N,N,N,CP_Drtn,TT_Task,DT_FixedDUR2,RV_OK,TK_NotStart,JK22,Piles Fabrication & Marking,,592,592,1000,0,0,0,1000,0,0,0,,,,2012-11-08 08:00,2013-04-07 16:00,,2012-08-06 08:00,2013-01-08 16:00,2012-08-06 08:00,2013-01-08 16:00,2012-08-06 08:00,2013-01-08 16:00,,2012-11-08 08:00,2013-04-07 16:00,,PT_Normal,,,,,6Fohv2YbuE6+fImPD2H/Cg,cmwt03k5QUWVZ2X2eta6kg,,,N,0,0,,,2012-06-20 10:14,2012-06-20 10:14,admin,admin
1102,145825,5115,23001,5686,1,0,N,N,N,CP_Drtn,TT_Task,DT_FixedDUR2,RV_OK,TK_NotStart,DS021,Fabrication and Painting of Below Production Deck/Legs,,0,0,840,0,0,0,840,0,0,0,,,,2012-06-13 08:00,2012-10-18 16:00,,2012-06-13 08:00,2012-10-18 16:00,2012-06-13 08:00,2012-10-18 16:00,2012-06-13 08:00,2012-10-18 16:00,,2012-06-13 08:00,2012-10-18 16:00,,PT_Normal,,,,,yWWZgvvzMU2V/k8c6YmkVg,YDhnGt4WSampcAcCK/B2gQ,,,Y,0,0,,,2012-06-20 10:14,2012-06-20 10:14,admin,admin
1103,145826,5115,23001,5686,1,0,N,N,N,CP_Drtn,TT_Task,DT_FixedDUR2,RV_OK,TK_NotStart,DS022,Fabrication and Painting of Production Deck,,0,0,960,0,0,0,960,0,0,0,,,,2012-06-13 08:00,2012-11-08 16:00,,2012-06-13 08:00,2012-11-08 16:00,2012-06-13 08:00,2012-11-08 16:00,2012-06-13 08:00,2012-11-08 16:00,,2012-06-13 08:00,2012-11-08 16:00,,PT_Normal,,,,,SKQpweZUMEWnu8MxpeAe3g,xFi93CoKSi++4GmIMxpP9w,,,Y,0,0,,,2012-06-20 10:14,2012-06-20 10:14,admin,admin
1104,145827,5115,23001,5686,1,0,N,N,N,CP_Drtn,TT_Task,DT_FixedDUR2,RV_OK,TK_NotStart,DS023,Fabrication and Paint of Heli-Deck ( & Lifting if Required),,400,0,960,0,0,0,960,0,0,0,,,,2012-10-29 08:00,2013-03-21 16:00,,2012-08-27 08:00,2013-01-20 16:00,2012-08-27 08:00,2013-01-20 16:00,2012-08-27 08:00,2013-01-20 16:00,,2012-10-29 08:00,2013-03-21 16:00,,PT_Normal,,,,,Ay9SAp5N+k+rH5Hi0+3ZUg,rvAg4dTFTzOC9LQPbMvlVA,,,N,0,0,,,2012-06-20 10:14,2012-06-20 10:14,admin,admin
1105,145828,5115,23001,5686,1,0,N,N,N,CP_Drtn,TT_Task,DT_FixedDUR2,RV_OK,TK_NotStart,DS024,Lifting Below Production Deck on High Cups,,24,0,40,0,0,0,40,0,0,0,,,,2012-10-23 08:00,2012-10-31 16:00,,2012-10-20 08:00,2012-10-24 16:00,2012-10-20 08:00,2012-10-24 16:00,2012-10-20 08:00,2012-10-24 16:00,,2012-10-23 08:00,2012-10-31 16:00,,PT_Normal,,,,,pOqdROAwv0SaygVC3RMy2w,bQ+CxC0TQriVcwNqie/vXQ,,,N,0,0,,,2012-06-20 10:14,2012-06-20 10:14,admin,admin
1106,145829,5115,23001,5686,1,0,N,N,N,CP_Drtn,TT_Task,DT_FixedDUR2,RV_OK,TK_NotStart,DS025,Lifting Production Deck on Below Production Level,,0,0,120,0,0,0,120,0,0,0,,,,2012-11-10 08:00,2012-11-27 16:00,,2012-11-10 08:00,2012-11-27 16:00,2012-11-10 08:00,2012-11-27 16:00,2012-11-10 08:00,2012-11-27 16:00,,2012-11-10 08:00,2012-11-27 16:00,,PT_Normal,,,,,Wz1XeK4QzE6aIyYUxaAnsA,kvv6UChdRT2TML26fqP2Og,,,Y,0,0,,,2012-06-20 10:14,2012-06-20 10:14,admin,admin
1107,145830,5115,23001,5686,1,0,N,N,N,CP_Drtn,TT_Task,DT_FixedDUR2,RV_OK,TK_NotStart,DS026,Fabrication & Installation of Deck Str. Miscellence / Padeyes,,80,24,960,0,0,0,960,0,0,0,,,,2012-10-17 08:00,2013-03-13 16:00,,2012-10-04 08:00,2013-03-02 16:00,2012-10-04 08:00,2013-03-02 16:00,2012-10-04 08:00,2013-03-02 16:00,,2012-10-17 08:00,2013-03-13 16:00,,PT_Normal,,,,,hK5iHWgFc0ifQKcQyu9ixw,CWEx43mfRrCS6ZOEt8Q5OA,,,N,0,0,,,2012-06-20 10:14,2012-06-20 10:14,admin,admin
1108,145831,5115,23001,5686,0,0,N,N,N,CP_Drtn,TT_FinMile,DT_FixedDrtn,RV_OK,TK_NotStart,DS027,Physical Weighting,,80,0,0,0,0,0,0,0,0,0,,,,2013-03-06 16:00,2013-03-06 16:00,,2013-02-23 16:00,2013-02-23 16:00,2013-02-23 16:00,2013-02-23 16:00,2013-02-23 16:00,2013-02-23 16:00,,2013-03-06 16:00,2013-03-06 16:00,,PT_Normal,,,,,pD87Gfv+aEe5yGPFmk03XQ,dU19c7ngSBGK2PpNjJWMWA,,,N,0,0,,,2012-06-20 10:14,2012-06-20 10:14,admin,admin
1109,145832,5115,23001,5686,1,0,N,N,N,CP_Drtn,TT_Task,DT_FixedDUR2,RV_OK,TK_NotStart,DS028,Clearanse of structure (Fab. & Painting ) Punch List,,56,56,168,0,0,0,168,0,0,0,,,,2013-03-14 08:00,2013-04-07 16:00,,2013-03-06 08:00,2013-03-30 16:00,2013-03-06 08:00,2013-03-30 16:00,2013-03-06 08:00,2013-03-30 16:00,,2013-03-14 08:00,2013-04-07 16:00,,PT_Normal,,,,,1zCfogBqm0SovaOb+fD3sA,2xbSngZtS1yuYdYRZesY/A,,,N,0,0,,,2012-06-20 10:14,2012-06-20 10:14,admin,admin
1110,145833,5115,23024,5686,1,0,N,N,N,CP_Drtn,TT_Task,DT_FixedDUR2,RV_OK,TK_NotStart,TFS021,Piping and Piping Supports Fabrication and Painting,,320,320,800,0,0,0,800,0,0,0,,,,2012-09-10 08:00,2013-01-10 16:00,,2012-07-21 08:00,2012-11-24 16:00,2012-07-21 08:00,2012-11-24 16:00,2012-07-21 08:00,2012-11-24 16:00,,2012-09-10 08:00,2013-01-10 16:00,,PT_Normal,,,,,LFlxh/RAk0+GYxtMyFcimg,MmyOxGLAQBKzrY9ic24SKw,,,N,0,0,,,2012-06-20 10:14,2012-06-20 10:14,admin,admin
1111,145834,5115,23024,5686,1,0,N,N,N,CP_Drtn,TT_Task,DT_FixedDUR2,RV_OK,TK_NotStart,TSF022,Piping and Piping Supports Erection,,0,0,600,0,0,0,600,0,0,0,,,,2012-11-25 08:00,2013-02-23 16:00,,2012-11-25 08:00,2013-02-23 16:00,2012-11-25 08:00,2013-02-23 16:00,2012-11-25 08:00,2013-02-23 16:00,,2012-11-25 08:00,2013-02-23 16:00,,PT_Normal,,,,,RrvagloAckm4/p8Hd76l5A,sdcBHYglTkmbL+zUfSnz1Q,,,Y,0,0,,,2012-06-20 10:14,2012-06-20 10:14,admin,admin
1112,145835,5115,23021,5686,1,0,N,N,N,CP_Drtn,TT_Task,DT_FixedDUR2,RV_OK,TK_NotStart,TSF023,Equipment Erection on Below Production Level,,24,24,56,0,0,0,56,0,0,0,,,,2012-11-01 08:00,2012-11-08 16:00,,2012-10-29 08:00,2012-11-05 16:00,2012-10-29 08:00,2012-11-05 16:00,2012-10-29 08:00,2012-11-05 16:00,,2012-11-01 08:00,2012-11-08 16:00,,PT_Normal,,,,,XDcfh7wFfUmli/c+yd3Vxw,z1CTK+RVT2ODKyZP+ZU/NQ,,,N,0,0,,,2012-06-20 10:14,2012-06-20 10:14,admin,admin
1113,145836,5115,23021,5686,1,0,N,N,N,CP_Drtn,TT_Task,DT_FixedDUR2,RV_OK,TK_NotStart,TSF024,Equipment Erection on Production Level,,216,216,120,0,0,0,120,0,0,0,,,,2012-12-30 08:00,2013-01-16 16:00,,2012-11-28 08:00,2012-12-15 16:00,2012-11-28 08:00,2012-12-15 16:00,2012-11-28 08:00,2012-12-15 16:00,,2012-12-30 08:00,2013-01-16 16:00,,PT_Normal,,,,,rbMo9iR/vEqnPcp3muZSRQ,uRd8e2PwTCikyeTQ2cwlXg,,,N,0,0,,,2012-06-20 10:14,2012-06-20 10:14,admin,admin
1114,145837,5115,23021,5686,1,0,N,N,N,CP_Drtn,TT_Task,DT_FixedDUR2,RV_OK,TK_NotStart,TSF025,Equipment Erection on Helideck,,400,400,56,0,0,0,56,0,0,0,,,,2013-02-16 08:00,2013-02-23 16:00,,2012-12-16 08:00,2012-12-23 16:00,2012-12-16 08:00,2012-12-23 16:00,2012-12-16 08:00,2012-12-23 16:00,,2013-02-16 08:00,2013-02-23 16:00,,PT_Normal,,,,,w6f3N2GB5kOAfG6gQ0H66Q,aPJaRDLhRCS2fQT2L4W4XQ,,,N,0,0,,,2012-06-20 10:14,2012-06-20 10:14,admin,admin
1115,145838,5115,23022,5686,1,0,N,N,N,CP_Drtn,TT_Task,DT_FixedDUR2,RV_OK,TK_NotStart,TS27,E&I Activity,,16,16,720,0,0,0,720,0,0,0,,,,2012-11-12 08:00,2013-02-28 16:00,,2012-11-10 08:00,2013-02-26 16:00,2012-11-10 08:00,2013-02-26 16:00,2012-11-10 08:00,2013-02-26 16:00,,2012-11-12 08:00,2013-02-28 16:00,,PT_Normal,,,,,eAIgTLyyPEaVzMfT4X6q0g,wsdfJJRZTh6vVDGXiSaIkQ,,,N,0,0,,,2012-06-20 10:14,2012-06-20 10:14,admin,admin
1116,145839,5115,23023,5686,1,0,N,N,N,CP_Drtn,TT_Task,DT_FixedDUR2,RV_OK,TK_NotStart,TS28,"Pre-commissioning """" Piping Hydrotest , Reinstatment , Megering , Continuity Test and Touch Up """"",,0,0,280,0,0,0,280,0,0,0,,,,2013-02-18 08:00,2013-03-30 16:00,,2013-02-18 08:00,2013-03-30 16:00,2013-02-18 08:00,2013-03-30 16:00,2013-02-18 08:00,2013-03-30 16:00,,2013-02-18 08:00,2013-03-30 16:00,,PT_Normal,,,,,g2PzKqtVnUidWqW43wHFyQ,lPjrgJbBSWyVdJYtkd0lWQ,,,Y,0,0,,,2012-06-20 10:14,2012-06-20 10:14,admin,admin
1117,145840,5115,22994,5686,1,0,N,N,N,CP_Drtn,TT_Task,DT_FixedDUR2,RV_OK,TK_NotStart,PL21,P/L Spools Fabrication,,832,0,720,0,0,0,720,0,0,0,,,,2012-11-07 08:00,2013-02-24 16:00,,2012-06-30 08:00,2012-10-17 16:00,2012-06-30 08:00,2012-10-17 16:00,2012-06-30 08:00,2012-10-17 16:00,,2012-11-07 08:00,2013-02-24 16:00,,PT_Normal,,,,,hirr5H2bzUO9vPmwYC6NEQ,HLJPh8QQQuqRB3kePFiOKw,,,N,0,0,,,2012-06-20 10:14,2012-06-20 10:14,admin,admin
1118,145841,5115,22996,5686,0,0,N,N,N,CP_Drtn,TT_Mile,DT_FixedDrtn,RV_OK,TK_NotStart,LOPS61,Arrival of 01st Shipment Material Barge ( P/L Spools),,0,128,0,0,0,0,0,0,0,0,2012-09-15 08:00,,,2012-09-15 08:00,2012-09-15 08:00,,2012-09-15 08:00,2012-09-15 08:00,2012-09-15 08:00,2012-09-15 08:00,2012-09-15 08:00,2012-09-15 08:00,,2012-09-15 08:00,2012-09-15 08:00,CS_MSO,PT_Normal,,,,,IjyCoYDdyEWkfhiStW/ZGw,B4Hx/kkxQZKPJEG8DiZMqQ,,,N,0,0,,,2012-06-20 10:14,2012-06-20 10:14,admin,admin
1119,145842,5115,22996,5686,1,0,N,N,N,CP_Drtn,TT_Task,DT_FixedDUR2,RV_OK,TK_NotStart,LOPS62,1st Shipment Material Barge Preparation,,1088,0,96,0,0,0,96,0,0,0,,,,2013-03-20 08:00,2013-04-02 16:00,,2012-10-03 08:00,2012-10-17 16:00,2012-10-03 08:00,2012-10-17 16:00,2012-10-03 08:00,2012-10-17 16:00,,2013-03-20 08:00,2013-04-02 16:00,,PT_Normal,,,,,tO/5GXwjvUSFylnPyv1J0A,ffJmeitJThGKpY3WVSZDNQ,,,N,0,0,,,2012-06-20 10:14,2012-06-20 10:14,admin,admin
1120,145843,5115,22996,5686,1,0,N,N,N,CP_Drtn,TT_Task,DT_FixedDUR2,RV_OK,TK_NotStart,LOPS63,"L/O & Sea Fastening (P/L Spools 18"""" & 8"""")",,1088,0,32,0,0,0,32,0,0,0,,,,2013-04-03 08:00,2013-04-07 16:00,,2012-10-18 08:00,2012-10-22 16:00,2012-10-18 08:00,2012-10-22 16:00,2012-10-18 08:00,2012-10-22 16:00,,2013-04-03 08:00,2013-04-07 16:00,,PT_Normal,,,,,i8qeMHNukkinxz23LDya5A,0IwOiWOuTGWgp9eZJV76QQ,,,N,0,0,,,2012-06-20 10:14,2012-06-20 10:14,admin,admin
1121,145844,5115,22997,5686,0,0,N,N,N,CP_Drtn,TT_Mile,DT_FixedDrtn,RV_OK,TK_NotStart,LOJK61,Arrival of 02nd Shipment Material Barge ( Jacket and Piles ),,0,263.983333,0,0,0,0,0,0,0,0,2012-12-01 08:01,,,2012-12-01 08:01,2012-12-01 08:01,,2012-12-01 08:01,2012-12-01 08:01,2012-12-01 08:01,2012-12-01 08:01,2012-12-01 08:01,2012-12-01 08:01,,2012-12-01 08:01,2012-12-01 08:01,CS_MSO,PT_Normal,,,,,qIX2y3tGUEOXunSaTSQSdg,TZSnzFwbTP2WYUW5WMHAXA,,,N,0,0,,,2012-06-20 10:14,2012-06-20 10:14,admin,admin
1122,145845,5115,22997,5686,1,0,N,N,N,CP_Drtn,TT_Task,DT_FixedDUR2,RV_OK,TK_NotStart,LOJK62,02nd Shipment Material Barge Preparation,,208,0,96,0,0,0,96,0,0,0,,,,2013-02-11 08:00,2013-02-24 16:00,,2013-01-09 08:00,2013-01-22 16:00,2013-01-09 08:00,2013-01-22 16:00,2013-01-09 08:00,2013-01-22 16:00,,2013-02-11 08:00,2013-02-24 16:00,,PT_Normal,,,,,KKULA+pShkaRKZjEzbzF4w,XbtAi6jCTDyBXVHSpw5OSQ,,,N,0,0,,,2012-06-20 10:14,2012-06-20 10:14,admin,admin
1123,145846,5115,22997,5686,1,0,N,N,N,CP_Drtn,TT_Task,DT_FixedDUR2,RV_OK,TK_NotStart,LOJK63,L/O & Sea fastening ( Jacket & Piles ),,208,0,56,0,0,0,56,0,0,0,,,,2013-02-25 08:00,2013-03-04 16:00,,2013-01-23 08:00,2013-01-31 16:00,2013-01-23 08:00,2013-01-31 16:00,2013-01-23 08:00,2013-01-31 16:00,,2013-02-25 08:00,2013-03-04 16:00,,PT_Normal,,,,,iwib86Y4xkO7ZiolupaOaQ,0h5qrf7kSZW3DGU5wFjrDw,,,N,0,0,,,2012-06-20 10:14,2012-06-20 10:14,admin,admin
1124,145847,5115,22993,5686,0,0,N,N,N,CP_Drtn,TT_Mile,DT_FixedDrtn,RV_OK,TK_NotStart,LODK61,Arrival of 03rd Shipment Material Barge ( Deck C/W TSF ),,-0.016667,104,0,0,0,0,0,0,0,0,2013-03-01 08:01,,,2013-02-28 15:59,2013-02-28 15:59,,2013-03-02 08:00,2013-03-02 08:00,2013-03-02 08:00,2013-03-02 08:00,2013-03-02 08:00,2013-03-02 08:00,,2013-02-28 15:59,2013-02-28 15:59,CS_MSO,PT_Normal,,,,,WBKbgg+jckCxl9O60x843Q,ExIEDAbgRLSmFck0X+OxYg,,,N,0,0,,,2012-06-20 10:14,2012-06-20 10:14,admin,admin
1125,145848,5115,22993,5686,1,0,N,N,N,CP_Drtn,TT_Task,DT_FixedDUR2,RV_OK,TK_NotStart,LODK62,3rd Shipment Material Barge Preparation,,0,0,96,0,0,0,96,0,0,0,,,,2013-03-17 08:00,2013-03-30 16:00,,2013-03-17 08:00,2013-03-30 16:00,2013-03-17 08:00,2013-03-30 16:00,2013-03-17 08:00,2013-03-30 16:00,,2013-03-17 08:00,2013-03-30 16:00,,PT_Normal,,,,,+m5/mCOjUkqRiKm8f0X0sg,lPDdUYuUTIydlmlcan93BQ,,,Y,0,0,,,2012-06-20 10:14,2012-06-20 10:14,admin,admin
1126,145849,5115,22993,5686,1,0,N,N,N,CP_Drtn,TT_Task,DT_FixedDUR2,RV_OK,TK_NotStart,LODK63,L/O & Sea fastening ( Deck),,0,0,56,0,0,0,56,0,0,0,,,,2013-03-31 08:00,2013-04-07 16:00,,2013-03-31 08:00,2013-04-07 16:00,2013-03-31 08:00,2013-04-07 16:00,2013-03-31 08:00,2013-04-07 16:00,,2013-03-31 08:00,2013-04-07 16:00,,PT_Normal,,,,,4BUPqFk00EKO/S3Nbwi/jg,a29m8wZtSbmmAh/FPoIQAw,,,Y,0,0,,,2012-06-20 10:14,2012-06-20 10:14,admin,admin
1127,145850,5115,22986,794,1,0,N,N,N,CP_Drtn,TT_Task,DT_FixedDrtn,RV_OK,TK_NotStart,PRP52,"Pipeline 8"""" & Fittings",,-0.016667,2087,408,0,0,0,408,0,0,0,2012-05-30 17:00,,,2012-05-30 16:59,2012-07-20 16:59,,2012-05-31 08:00,2012-07-20 17:00,2012-05-31 08:00,2012-07-20 17:00,2012-05-31 08:00,2012-07-20 17:00,,2012-05-30 16:59,2012-07-20 16:59,CS_MSO,PT_Normal,,,,,asPy8iP49Ue5inR8iLokZA,tjm2mx2cUUyxd/Z8deMfQA,,,N,0,0,,,2012-06-20 10:14,2012-06-20 10:14,admin,admin
1128,145851,5115,22974,5686,0,0,N,N,N,CP_Drtn,TT_FinMile,DT_FixedDrtn,RV_OK,TK_NotStart,GM31,Reciving Fax of Award,,-0.016667,0,0,0,0,0,0,0,0,0,2012-01-20 16:00,,,2012-01-19 16:00,2012-01-19 16:00,,2012-01-21 08:01,2012-01-21 08:01,2012-01-21 08:01,2012-01-21 08:01,2012-01-21 08:01,2012-01-21 08:01,,2012-01-19 16:00,2012-01-19 16:00,CS_MEO,PT_Normal,,,,,tHSCi3c9u0WUh9qYlGRUjw,QntCRO6hKk2dGYdaC4jC+A,,,N,0,0,,,2012-06-20 10:14,2012-06-20 10:14,admin,admin
1129,145852,5115,22974,5686,0,0,N,N,N,CP_Drtn,TT_Mile,DT_FixedDrtn,RV_OK,TK_NotStart,GM32,Project Fab. Start,,1951.983333,1952,0,0,0,0,0,0,0,0,,,,2013-04-07 15:59,2013-04-07 15:59,,2012-06-13 08:00,2012-06-13 08:00,2012-06-13 08:00,2012-06-13 08:00,2012-06-13 08:00,2012-06-13 08:00,,2013-04-07 15:59,2013-04-07 15:59,,PT_Normal,,,,,UJ4TxTKet022VunSmr1nFg,BLyTuTslCE6HWg/1RLrlRA,,,N,0,0,,,2012-06-20 10:14,2012-06-20 10:14,admin,admin
1130,145853,5115,22974,5686,0,0,N,N,N,CP_Drtn,TT_Mile,DT_FixedDrtn,RV_OK,TK_NotStart,GM34,Ready for Load out ( 02nd Shipment/ Jacket & Piles ),,208,208,0,0,0,0,0,0,0,0,,,,2013-02-25 08:00,2013-02-25 08:00,,2013-01-23 08:00,2013-01-23 08:00,2013-01-23 08:00,2013-01-23 08:00,2013-01-23 08:00,2013-01-23 08:00,,2013-02-25 08:00,2013-02-25 08:00,,PT_Normal,,,,,3eXso9l8xE2Sk/rrCbpMLw,gFZONbWIK0C+nNXjlIz6uQ,,,N,0,0,,,2012-06-20 10:14,2012-06-20 10:14,admin,admin
1131,145854,5115,22974,5686,0,0,N,N,N,CP_Drtn,TT_Mile,DT_FixedDrtn,RV_OK,TK_NotStart,GM35,Ready for Load out ( 03rd Shipment/ Deck C/W TSF ),,55.983333,56,0,0,0,0,0,0,0,0,,,,2013-04-07 15:59,2013-04-07 15:59,,2013-03-31 08:00,2013-03-31 08:00,2013-03-31 08:00,2013-03-31 08:00,2013-03-31 08:00,2013-03-31 08:00,,2013-04-07 15:59,2013-04-07 15:59,,PT_Normal,,,,,msJs0NGz/0e5maDmoY4Q9w,9s2ympvYOEiZvw5ljG+Kxw,,,N,0,0,,,2012-06-20 10:14,2012-06-20 10:14,admin,admin
1132,145855,5115,22974,5686,0,0,N,N,N,CP_Drtn,TT_Mile,DT_FixedDrtn,RV_OK,TK_NotStart,GM33,"Ready for Load out (01st Shipment / Pipeline Spools 18"""" & 8"""")",,1119.983333,1120,0,0,0,0,0,0,0,0,,,,2013-04-07 15:59,2013-04-07 15:59,,2012-10-18 08:00,2012-10-18 08:00,2012-10-18 08:00,2012-10-18 08:00,2012-10-18 08:00,2012-10-18 08:00,,2013-04-07 15:59,2013-04-07 15:59,,PT_Normal,,,,,IX2aPqahKE6koeQ9kRg4fQ,6hkgSxtQukaozXDsVGKVjA,,,N,0,0,,,2012-06-20 10:14,2012-06-20 10:14,admin,admin
1133,145856,5115,22983,794,1,0,N,N,N,CP_Drtn,TT_Task,DT_FixedDrtn,RV_OK,TK_NotStart,ENS33,Receiving Jacket Primary & Secondary Steel IFC DWG`s,,0,0,1104,0,0,0,1104,0,0,0,2011-11-30 08:01,,,2011-11-30 08:01,2012-04-16 08:01,,2011-11-30 08:01,2012-04-16 08:01,2011-11-30 08:01,2012-04-16 08:01,2011-11-30 08:01,2012-04-16 08:01,,2011-11-30 08:01,2012-04-16 08:01,CS_MSO,PT_Normal,,,,,qD+VM9Koh0udSeknNCv/2Q,fQn8/D6rEUSlwSy++aYoQA,,,N,0,0,,,2012-06-20 10:14,2012-06-20 10:14,admin,admin
1134,145857,5115,22983,794,0,0,N,N,N,CP_Drtn,TT_FinMile,DT_FixedDrtn,RV_OK,TK_NotStart,ENS34,Receiving Piles IFC DWG`s,,0,720,0,0,0,0,0,0,0,0,2012-01-17 08:01,,,2012-01-17 08:01,2012-01-17 08:01,,2012-01-17 08:01,2012-01-17 08:01,2012-01-17 08:01,2012-01-17 08:01,2012-01-17 08:01,2012-01-17 08:01,,2012-01-17 08:01,2012-01-17 08:01,CS_MEO,PT_Normal,,,,,Hiit9Kle0kyUCGtKnJ6nww,585mTWwaOUekmnE83+A1kg,,,N,0,0,,,2012-06-20 10:14,2012-06-20 10:14,admin,admin
1135,145858,5115,22983,794,1,0,N,N,N,CP_Drtn,TT_Task,DT_FixedDUR2,RV_OK,TK_NotStart,ENS35,Receiving Deck Str. Primary & Secondary IFC DWG`s,,0,224,328,0,0,0,328,0,0,0,2012-02-07 08:01,,,2012-02-07 08:01,2012-03-19 08:01,,2012-02-07 08:01,2012-03-19 08:01,2012-02-07 08:01,2012-03-19 08:01,2012-02-07 08:01,2012-03-19 08:01,,2012-02-07 08:01,2012-03-19 08:01,CS_MSO,PT_Normal,,,,,TxVYr9tBgUmOcN7EXWZugA,vDJwuFiedked97VMopq//w,,,N,0,0,,,2012-06-20 10:14,2012-06-20 10:14,admin,admin
1136,145859,5115,22983,794,0,0,N,N,N,CP_Drtn,TT_FinMile,DT_FixedDrtn,RV_OK,TK_NotStart,ENS31,"Receiving Final Jacket , Boat Land & Piles MTO",,135.983333,135.983333,0,0,0,0,0,0,0,0,,,,2012-02-14 17:00,2012-02-14 17:00,,2012-01-29 08:01,2012-01-29 08:01,2012-01-29 08:01,2012-01-29 08:01,2012-01-29 08:01,2012-01-29 08:01,,2012-02-14 17:00,2012-02-14 17:00,,PT_Normal,,,,,5y8DWO6P0k65PYcoPBIjiA,hfJ8sj6Ai02DimJPwXbdQw,,,N,0,0,,,2012-06-20 10:14,2012-06-20 10:14,admin,admin
1137,145860,5115,22983,794,0,0,N,N,N,CP_Drtn,TT_FinMile,DT_FixedDrtn,RV_OK,TK_NotStart,ENS32,Receiving Final Deck Str. MTO,,135.983333,135.983333,0,0,0,0,0,0,0,0,,,,2012-02-14 17:00,2012-02-14 17:00,,2012-01-29 08:01,2012-01-29 08:01,2012-01-29 08:01,2012-01-29 08:01,2012-01-29 08:01,2012-01-29 08:01,,2012-02-14 17:00,2012-02-14 17:00,,PT_Normal,,,,,DWl4WuqNPkCUMUAEpaJ/3w,0X6GOG/si0W/k3axqY1amw,,,N,0,0,,,2012-06-20 10:14,2012-06-20 10:14,admin,admin
1138,145861,5115,22983,794,1,0,N,N,N,CP_Drtn,TT_Task,DT_FixedDrtn,RV_OK,TK_NotStart,ENS38,Receiving IFC Equipment fixation DWG`s,,0,1559.983333,104,0,0,0,104,0,0,0,2012-04-04 08:01,,,2012-04-04 08:01,2012-04-17 08:01,,2012-04-04 08:01,2012-04-17 08:01,2012-04-04 08:01,2012-04-17 08:01,2012-04-04 08:01,2012-04-17 08:01,,2012-04-04 08:01,2012-04-17 08:01,CS_MSO,PT_Normal,,,,,4j5GQlzj40WzkheRhdLlSg,IwC8dusvkkeoGNbz2wydyg,,,N,0,0,,,2012-06-20 10:14,2012-06-20 10:14,admin,admin
1139,145862,5115,22983,794,1,0,N,N,N,CP_Drtn,TT_Task,DT_FixedDUR2,RV_OK,TK_NotStart,ENS36,Receiving Piping Supports IFC DWG's,,0,3078.983333,160,0,0,0,160,0,0,0,2012-02-28 08:01,,,2012-02-28 08:01,2012-03-19 08:01,,2012-02-28 08:01,2012-03-19 08:01,2012-02-28 08:01,2012-03-19 08:01,2012-02-28 08:01,2012-03-19 08:01,,2012-02-28 08:01,2012-03-19 08:01,CS_MSO,PT_Normal,,,,,sym2f3uyP0+wxqNxbTDWuw,fwqWJuI73UKeEIb3GJFIaA,,,N,0,0,,,2012-06-20 10:14,2012-06-20 10:14,admin,admin
1140,145863,5115,22983,794,1,0,N,N,N,CP_Drtn,TT_Task,DT_FixedDUR2,RV_OK,TK_NotStart,ENS37,Receiving Cable tarys Support IFC DWG's,,0,3022.983333,104,0,0,0,104,0,0,0,2012-03-13 08:01,,,2012-03-13 08:01,2012-03-26 08:01,,2012-03-13 08:01,2012-03-26 08:01,2012-03-13 08:01,2012-03-26 08:01,2012-03-13 08:01,2012-03-26 08:01,,2012-03-13 08:01,2012-03-26 08:01,CS_MSO,PT_Normal,,,,,8Mm2O8d4iE+QSDGmU1vDQQ,uubwd56Wz0KTSuLtYlidjg,,,N,0,0,,,2012-06-20 10:14,2012-06-20 10:14,admin,admin
1141,145864,5115,22983,794,1,0,N,N,N,CP_Drtn,TT_Task,DT_FixedDrtn,RV_OK,TK_NotStart,ENS39,"Receiving P/L 8"""" & 18"""" IFC DWG's",,0,2736,160,0,0,0,160,0,0,0,2012-04-10 16:00,,,2012-04-10 16:00,2012-04-30 16:00,,2012-04-10 16:00,2012-04-30 16:00,2012-04-10 16:00,2012-04-30 16:00,2012-04-10 16:00,2012-04-30 16:00,,2012-04-10 16:00,2012-04-30 16:00,CS_MSO,PT_Normal,,,,,MI9svbRELUGUtefDJQ9zzQ,oIVfzDIEhEGkQBAOSFzBdQ,,,N,0,0,,,2012-06-20 10:14,2012-06-20 10:14,admin,admin
1142,145865,5115,22981,794,1,0,N,N,N,CP_Drtn,TT_Task,DT_FixedDrtn,RV_OK,TK_NotStart,ENT33,Receiving Piping ISO`s IFC DWG's,,0,1047.983333,112,0,0,0,112,0,0,0,2012-02-27 08:01,,,2012-02-27 08:01,2012-03-12 08:01,,2012-02-27 08:01,2012-03-12 08:01,2012-02-27 08:01,2012-03-12 08:01,2012-02-27 08:01,2012-03-12 08:01,,2012-02-27 08:01,2012-03-12 08:01,CS_MSO,PT_Normal,,,,,nLrx3nRKU0KQN9U3Usbnlg,EbAV7O3+0UWzxWiIdkWuwA,,,N,0,0,,,2012-06-20 10:14,2012-06-20 10:14,admin,admin
1143,145866,5115,22981,794,0,0,N,N,N,CP_Drtn,TT_FinMile,DT_FixedDrtn,RV_OK,TK_NotStart,ENT31,Issue Approved P&ID's / Equipment List IFC DWG's,,0,3584,0,0,0,0,0,0,0,0,2012-01-15 16:00,,,2012-01-15 16:00,2012-01-15 16:00,,2012-01-15 16:00,2012-01-15 16:00,2012-01-15 16:00,2012-01-15 16:00,2012-01-15 16:00,2012-01-15 16:00,,2012-01-15 16:00,2012-01-15 16:00,CS_MEO,PT_Normal,,,,,vRvfAj5vO0Svoa/35HWhtA,aW4hUSQwQkyC6xUGkTqBNw,,,N,0,0,,,2012-06-20 10:14,2012-06-20 10:14,admin,admin
1144,145867,5115,22981,794,0,0,N,N,N,CP_Drtn,TT_FinMile,DT_FixedDrtn,RV_OK,TK_NotStart,ENT32,Issue plat plans IFC DWG's,,0,3408,0,0,0,0,0,0,0,0,2012-02-06 16:00,,,2012-02-06 16:00,2012-02-06 16:00,,2012-02-06 16:00,2012-02-06 16:00,2012-02-06 16:00,2012-02-06 16:00,2012-02-06 16:00,2012-02-06 16:00,,2012-02-06 16:00,2012-02-06 16:00,CS_MEO,PT_Normal,,,,,5ZUS3O0MhUqqK7wNKgQ2+Q,BK+nLP810UCbJMC0LPk30g,,,N,0,0,,,2012-06-20 10:14,2012-06-20 10:14,admin,admin
1145,145868,5115,22981,5686,0,0,N,N,N,CP_Drtn,TT_FinMile,DT_FixedDrtn,RV_OK,TK_NotStart,ENT34,Issue Hydrotest maps & loops IFC DWG's,,0,2648,0,0,0,0,0,0,0,0,2012-02-28 16:00,,,2012-02-28 16:00,2012-02-28 16:00,,2012-02-28 16:00,2012-02-28 16:00,2012-02-28 16:00,2012-02-28 16:00,2012-02-28 16:00,2012-02-28 16:00,,2012-02-28 16:00,2012-02-28 16:00,CS_MEO,PT_Normal,,,,,xlK1a9Dlu0uUbdirx3jO3A,fHwgfAMtLECZ5IJXBmoKbw,,,N,0,0,,,2012-06-20 10:14,2012-06-20 10:14,admin,admin
1146,145869,5115,22982,794,1,0,N,N,N,CP_Drtn,TT_Task,DT_FixedDUR2,RV_OK,TK_NotStart,ENE31,Receiving E&I IFC DWG`s,,0,2279.983333,776,0,0,0,776,0,0,0,2012-01-23 08:01,,,2012-01-23 08:01,2012-04-29 08:01,,2012-01-23 08:01,2012-04-29 08:01,2012-01-23 08:01,2012-04-29 08:01,2012-01-23 08:01,2012-04-29 08:01,,2012-01-23 08:01,2012-04-29 08:01,CS_MSO,PT_Normal,,,,,382ZFfJC9kSVrDI7ZLm76w,PBmCenI7YEKLp6iD84Cr7Q,,,N,0,0,,,2012-06-20 10:14,2012-06-20 10:14,admin,admin
1147,145870,5115,22977,5686,1,0,N,N,N,CP_Drtn,TT_Task,DT_FixedDUR2,RV_OK,TK_NotStart,PF31,Pre-Fabrication of Steel Structure ( Jacket & Piles),,208,0,960,0,0,0,960,0,0,0,,,,2012-07-14 08:00,2012-12-10 16:00,,2012-06-13 08:00,2012-11-08 16:00,2012-06-13 08:00,2012-11-08 16:00,2012-06-13 08:00,2012-11-08 16:00,,2012-07-14 08:00,2012-12-10 16:00,,PT_Normal,,,,,WK5x+aWMqk2yQ0hP+NPCJQ,BXGh6gKxm0iB+B+N2Cm2ag,,,N,0,0,,,2012-06-20 10:14,2012-06-20 10:14,admin,admin
1148,145871,5115,22995,794,1,0,N,N,N,CP_Drtn,TT_Task,DT_FixedDUR2,RV_OK,TK_NotStart,PRT61,Piping Bulk material 1st batch,,-0.016667,536,240,0,0,0,240,0,0,0,2012-05-07 17:00,,,2012-05-07 16:59,2012-06-06 16:59,,2012-05-08 08:00,2012-06-06 17:00,2012-05-08 08:00,2012-06-06 17:00,2012-05-08 08:00,2012-06-06 17:00,,2012-05-07 16:59,2012-06-06 16:59,CS_MSO,PT_Normal,,,,,PHT5UfdpYEaOckyf3OFQEg,mlVZd8jlMk6fm6lMahemSA,,,N,0,0,,,2012-06-20 10:14,2012-06-20 10:14,admin,admin
1149,145872,5115,22995,794,1,0,N,N,N,CP_Drtn,TT_Task,DT_FixedDUR2,RV_OK,TK_NotStart,PRT62,Piping Bulk material 2nd batch,,-0.016667,855,240,0,0,0,240,0,0,0,2012-06-10 17:00,,,2012-06-10 16:59,2012-07-10 16:59,,2012-06-11 08:00,2012-07-10 17:00,2012-06-11 08:00,2012-07-10 17:00,2012-06-11 08:00,2012-07-10 17:00,,2012-06-10 16:59,2012-07-10 16:59,CS_MSO,PT_Normal,,,,,H656Z8H7rUeLKFPFFGaTgA,XSjOeWLmc0Suy1GGlTLASQ,,,N,0,0,,,2012-06-20 10:14,2012-06-20 10:14,admin,admin
1150,145873,5115,22995,794,1,0,N,N,N,CP_Drtn,TT_Task,DT_FixedDUR2,RV_OK,TK_NotStart,PRT33,Piping Valves Bulk material 1st batch,,-0.016667,999,112,0,0,0,112,0,0,0,2012-06-23 17:00,,,2012-06-23 16:59,2012-07-07 16:59,,2012-06-24 08:00,2012-07-07 17:00,2012-06-24 08:00,2012-07-07 17:00,2012-06-24 08:00,2012-07-07 17:00,,2012-06-23 16:59,2012-07-07 16:59,CS_MSO,PT_Normal,,,,,mj6efTyrF0OV6C6JhpKdPQ,mQTrdmlAckeihDmyjty0yw,,,N,0,0,,,2012-06-20 10:14,2012-06-20 10:14,admin,admin
1151,145874,5115,22995,794,1,0,N,N,N,CP_Drtn,TT_Task,DT_FixedDUR2,RV_OK,TK_NotStart,PRT34,Piping valves Bulk material 2nd batch,,-0.016667,767,112,0,0,0,112,0,0,0,2012-07-22 17:00,,,2012-07-22 16:59,2012-08-05 16:59,,2012-07-23 08:00,2012-08-05 17:00,2012-07-23 08:00,2012-08-05 17:00,2012-07-23 08:00,2012-08-05 17:00,,2012-07-22 16:59,2012-08-05 16:59,CS_MSO,PT_Normal,,,,,yyam4RdJ80W2hnLYcAsQwg,XYLgLhVz1EisgV8ctlneGw,,,N,0,0,,,2012-06-20 10:14,2012-06-20 10:14,admin,admin
1152,145875,5115,22995,794,1,0,N,N,N,CP_Drtn,TT_Task,DT_FixedDUR2,RV_OK,TK_NotStart,PRT35,Flanges,,-0.016667,8,360,0,0,0,360,0,0,0,2012-07-13 17:00,,,2012-07-13 16:59,2012-08-27 16:59,,2012-07-14 08:00,2012-08-27 17:00,2012-07-14 08:00,2012-08-27 17:00,2012-07-14 08:00,2012-08-27 17:00,,2012-07-13 16:59,2012-08-27 16:59,CS_MSO,PT_Normal,,,,,G7NYcDlqS0OewkygpeR2YA,ynw/2kVsJUCQTiDjWuiUKg,,,N,0,0,,,2012-06-20 10:14,2012-06-20 10:14,admin,admin
1153,145876,5115,22995,794,1,0,N,N,N,CP_Drtn,TT_Task,DT_FixedDUR2,RV_OK,TK_NotStart,PRT36,Pressure Safety Valve,,-0.016667,1519,352,0,0,0,352,0,0,0,2012-06-04 17:00,,,2012-06-04 16:59,2012-07-18 16:59,,2012-06-05 08:00,2012-07-18 17:00,2012-06-05 08:00,2012-07-18 17:00,2012-06-05 08:00,2012-07-18 17:00,,2012-06-04 16:59,2012-07-18 16:59,CS_MSO,PT_Normal,,,,,xxBJeB81RUGOmePocKZdwA,FmcfYmS0CkqRp6Gvxanm2A,,,N,0,0,,,2012-06-20 10:14,2012-06-20 10:14,admin,admin
1154,145877,5115,22995,794,1,0,N,N,N,CP_Drtn,TT_Task,DT_FixedDUR2,RV_OK,TK_NotStart,PRT37,Pressure regulator Valve,,-0.016667,1231,240,0,0,0,240,0,0,0,2012-07-24 17:00,,,2012-07-24 16:59,2012-08-23 16:59,,2012-07-25 08:00,2012-08-23 17:00,2012-07-25 08:00,2012-08-23 17:00,2012-07-25 08:00,2012-08-23 17:00,,2012-07-24 16:59,2012-08-23 16:59,CS_MSO,PT_Normal,,,,,eJpqa1G3zECMQi6Cpx/wpA,MUMBakw88UCMBwfosGhvtA,,,N,0,0,,,2012-06-20 10:14,2012-06-20 10:14,admin,admin
1155,145878,5115,22995,794,1,0,N,N,N,CP_Drtn,TT_Task,DT_FixedDUR2,RV_OK,TK_NotStart,PRT38,Shutdown Valve,,-0.016667,1135,248,0,0,0,248,0,0,0,2012-08-04 17:00,,,2012-08-04 16:59,2012-09-04 16:59,,2012-08-05 08:00,2012-09-04 17:00,2012-08-05 08:00,2012-09-04 17:00,2012-08-05 08:00,2012-09-04 17:00,,2012-08-04 16:59,2012-09-04 16:59,CS_MSO,PT_Normal,,,,,7fLhljIHiEGMQcMzk36aow,3HVeZrPw+kua3HhPYoeooQ,,,N,0,0,,,2012-06-20 10:14,2012-06-20 10:14,admin,admin
1156,145879,5115,22984,794,1,0,N,N,N,CP_Drtn,TT_Task,DT_FixedDUR2,RV_OK,TK_NotStart,PRT39,Chemical Injection PKG.,,-0.016667,1264,360,0,0,0,360,0,0,0,2012-05-08 17:00,,,2012-05-08 16:59,2012-06-22 16:59,,2012-05-09 08:00,2012-06-22 17:00,2012-05-09 08:00,2012-06-22 17:00,2012-05-09 08:00,2012-06-22 17:00,,2012-05-08 16:59,2012-06-22 16:59,CS_MSO,PT_Normal,,,,,rowC3fO4skyDOQU4VmkV6g,atgCRGby9EyY4hjcV3KVMw,,,N,0,0,,,2012-06-20 10:14,2012-06-20 10:14,admin,admin
1157,145880,5115,22984,794,1,0,N,N,N,CP_Drtn,TT_Task,DT_FixedDUR2,RV_OK,TK_NotStart,PRT40,Launcher recivier,,-0.016667,960,360,0,0,0,360,0,0,0,2012-06-15 17:00,,,2012-06-15 16:59,2012-07-30 16:59,,2012-06-16 08:00,2012-07-30 17:00,2012-06-16 08:00,2012-07-30 17:00,2012-06-16 08:00,2012-07-30 17:00,,2012-06-15 16:59,2012-07-30 16:59,CS_MSO,PT_Normal,,,,,BA+fVK3xAkGRZvD2Dtd8XQ,EKOmDBP6cEq6EOVl5NB3WA,,,N,0,0,,,2012-06-20 10:14,2012-06-20 10:14,admin,admin
1158,145881,5115,22984,794,1,0,N,N,N,CP_Drtn,TT_Task,DT_FixedDUR2,RV_OK,TK_NotStart,PRT71,Vent KOD,,-0.016667,864,360,0,0,0,360,0,0,0,2012-06-27 17:00,,,2012-06-27 16:59,2012-08-11 16:59,,2012-06-28 08:00,2012-08-11 17:00,2012-06-28 08:00,2012-08-11 17:00,2012-06-28 08:00,2012-08-11 17:00,,2012-06-27 16:59,2012-08-11 16:59,CS_MSO,PT_Normal,,,,,nvMunuRw+UmX2TXwzUaIfg,rf+Er5qWCU2Vl8wE317jGQ,,,N,0,0,,,2012-06-20 10:14,2012-06-20 10:14,admin,admin
1159,145882,5115,22984,794,1,0,N,N,N,CP_Drtn,TT_Task,DT_FixedDUR2,RV_OK,TK_NotStart,PRT72,Open Drain Tank,,-0.016667,624,360,0,0,0,360,0,0,0,2012-06-27 17:00,,,2012-06-27 16:59,2012-08-11 16:59,,2012-06-28 08:00,2012-08-11 17:00,2012-06-28 08:00,2012-08-11 17:00,2012-06-28 08:00,2012-08-11 17:00,,2012-06-27 16:59,2012-08-11 16:59,CS_MSO,PT_Normal,,,,,XhgoVfwDJ0+E+FdejNY4ow,QEatGDsWyEC05CbcxV4PSA,,,N,0,0,,,2012-06-20 10:14,2012-06-20 10:14,admin,admin
1160,145883,5115,22985,794,1,0,N,N,N,CP_Drtn,TT_Task,DT_FixedDUR2,RV_OK,TK_NotStart,PRS33,Delivery of Structure Material (F.O.B - 13 Wks.) - (Gupco Responsability),,0,0,728,0,0,0,728,0,0,0,,,,2012-02-15 08:00,2012-05-15 17:00,,2012-02-15 08:00,2012-05-15 17:00,2012-02-15 08:00,2012-05-15 17:00,2012-02-15 08:00,2012-05-15 17:00,,2012-02-15 08:00,2012-05-15 17:00,,PT_Normal,,,,,h/bpQrcn4kaAifDay2Jwig,ufROFkTcoEuCgCWoyMhxDg,,,Y,0,0,,,2012-06-20 10:14,2012-06-20 10:14,admin,admin
1161,145884,5115,22985,794,1,0,N,N,N,CP_Drtn,TT_Task,DT_FixedDUR2,RV_OK,TK_NotStart,PRS35,Material check with IFC DWG's to Prepare balance material,,1566.983333,0,56,0,0,0,56,0,0,0,,,,2012-10-28 16:00,2012-11-04 16:00,,2012-04-16 08:01,2012-04-23 08:01,2012-04-16 08:01,2012-04-23 08:01,2012-04-16 08:01,2012-04-23 08:01,,2012-10-28 16:00,2012-11-04 16:00,,PT_Normal,,,,,pIOjcjvxtU+93tJY+AW1yQ,WHf9ahQtqU2p9l32LH4nFg,,,N,0,0,,,2012-06-20 10:14,2012-06-20 10:14,admin,admin
1162,145885,5115,22985,794,1,0,N,N,N,CP_Drtn,TT_Task,DT_FixedDUR2,RV_OK,TK_NotStart,PRS36,Delivery of balance material,,1566.983333,1566.983333,1232,0,0,0,1232,0,0,0,,,,2012-11-04 16:00,2013-04-07 16:00,,2012-04-23 08:01,2012-09-24 08:01,2012-04-23 08:01,2012-09-24 08:01,2012-04-23 08:01,2012-09-24 08:01,,2012-11-04 16:00,2013-04-07 16:00,,PT_Normal,,,,,6oGJbujKFkO/siXCaLM9xg,qqmATIO3T0mle0HolK/t5g,,,N,0,0,,,2012-06-20 10:14,2012-06-20 10:14,admin,admin
1163,145886,5115,22985,794,0,0,N,N,N,CP_Drtn,TT_Mile,DT_FixedDrtn,RV_OK,TK_NotStart,PRS31,Issue Structural Material P.O's ( Gupco Responsability),,0,64,0,0,0,0,0,0,0,0,2012-02-07 08:00,,,2012-02-07 08:00,2012-02-07 08:00,,2012-02-07 08:00,2012-02-07 08:00,2012-02-07 08:00,2012-02-07 08:00,2012-02-07 08:00,2012-02-07 08:00,,2012-02-07 08:00,2012-02-07 08:00,CS_MSO,PT_Normal,,,,,NX5ow1qGKk+LyWPLbqT0OQ,pHgYmay3DEa6F1CjhdcYlQ,,,N,0,0,,,2012-06-20 10:14,2012-06-20 10:14,admin,admin
1164,145887,5115,22985,794,0,0,N,N,N,CP_Drtn,TT_Mile,DT_FixedDrtn,RV_OK,TK_NotStart,PRS32,Issue LC ( Gupco Responsability),,0,0,0,0,0,0,0,0,0,0,2012-02-15 08:00,,,2012-02-15 08:00,2012-02-15 08:00,,2012-02-15 08:00,2012-02-15 08:00,2012-02-15 08:00,2012-02-15 08:00,2012-02-15 08:00,2012-02-15 08:00,,2012-02-15 08:00,2012-02-15 08:00,CS_MSO,PT_Normal,,,,,8cSoZtfvK0CYZEtT59FaWw,veFibYaEtEavYsz0ENZ8Xw,,,Y,0,0,,,2012-06-20 10:14,2012-06-20 10:14,admin,admin
1165,145888,5115,22985,794,1,0,N,N,N,CP_Drtn,TT_Task,DT_FixedDUR2,RV_OK,TK_NotStart,PRS34,Delivery of Structure Material at Site (4 Wks.),,0,0,224,0,0,0,224,0,0,0,,,,2012-05-16 08:00,2012-06-12 17:00,,2012-05-16 08:00,2012-06-12 17:00,2012-05-16 08:00,2012-06-12 17:00,2012-05-16 08:00,2012-06-12 17:00,,2012-05-16 08:00,2012-06-12 17:00,,PT_Normal,,,,,T3M0ZkXOy0eDQyWyvfqSCw,nRJYaZzK+UG2EPxNOD2G8g,,,Y,0,0,,,2012-06-20 10:14,2012-06-20 10:14,admin,admin
1166,145889,5115,22986,794,1,0,N,N,N,CP_Drtn,TT_Task,DT_FixedDrtn,RV_OK,TK_NotStart,PRP31,"Pipeline 18"""" & Fittings",,0,0,408,0,0,0,408,0,0,0,2012-05-31 08:00,,,2012-05-31 08:00,2012-07-20 17:00,,2012-05-31 08:00,2012-07-20 17:00,2012-05-31 08:00,2012-07-20 17:00,2012-05-31 08:00,2012-07-20 17:00,,2012-05-31 08:00,2012-07-20 17:00,CS_MSO,PT_Normal,,,,,UIZmAj3NX0OWtN1H9pcqUA,0gQPSnx6fE6L7wIm15puCg,,,N,0,0,,,2012-06-20 10:14,2012-06-20 10:14,admin,admin
1167,145890,5115,22986,794,1,0,N,N,N,CP_Drtn,TT_Task,DT_FixedDrtn,RV_OK,TK_NotStart,PRP62,"Pipeline 8"""" & Fittings",,-0.016667,351,408,0,0,0,408,0,0,0,2012-05-30 17:00,,,2012-05-30 16:59,2012-07-20 16:59,,2012-05-31 08:00,2012-07-20 17:00,2012-05-31 08:00,2012-07-20 17:00,2012-05-31 08:00,2012-07-20 17:00,,2012-05-30 16:59,2012-07-20 16:59,CS_MSO,PT_Normal,,,,,/fw6vejtv0+Rl5kmzNl+lw,AxWyZ9p3n0Oi1nGfbffvUg,,,N,0,0,,,2012-06-20 10:14,2012-06-20 10:14,admin,admin
1168,145891,5115,23010,794,1,0,N,N,N,CP_Drtn,TT_Task,DT_FixedDUR2,RV_OK,TK_NotStart,PRE37,Radar system,,-0.016667,904,240,0,0,0,240,0,0,0,2012-06-19 17:00,,,2012-06-19 16:59,2012-07-19 16:59,,2012-06-20 08:00,2012-07-19 17:00,2012-06-20 08:00,2012-07-19 17:00,2012-06-20 08:00,2012-07-19 17:00,,2012-06-19 16:59,2012-07-19 16:59,CS_MSO,PT_Normal,,,,,cddECyZI0kO1u46w90Y+iw,ZwOgBmKoj0abTWYrf+cpXQ,,,N,0,0,,,2012-06-20 10:14,2012-06-20 10:14,admin,admin
1169,145892,5115,23010,794,1,0,N,N,N,CP_Drtn,TT_Task,DT_FixedDUR2,RV_OK,TK_NotStart,PRE38,Navegation Aids,,-0.016667,1384,360,0,0,0,360,0,0,0,2012-04-05 17:00,,,2012-04-05 16:59,2012-05-20 16:59,,2012-04-06 08:00,2012-05-20 17:00,2012-04-06 08:00,2012-05-20 17:00,2012-04-06 08:00,2012-05-20 17:00,,2012-04-05 16:59,2012-05-20 16:59,CS_MSO,PT_Normal,,,,,QghO8zF7m0yRrl1dEY6Hsw,AdPCWeKs9Eu/XKLAjtX/xg,,,N,0,0,,,2012-06-20 10:14,2012-06-20 10:14,admin,admin
1170,145893,5115,23006,794,1,0,N,N,N,CP_Drtn,TT_Task,DT_FixedDUR2,RV_OK,TK_NotStart,PRE61,Electrical Bulks,,-0.016667,512,360,0,0,0,360,0,0,0,2012-07-23 17:00,,,2012-07-23 16:59,2012-09-06 16:59,,2012-07-24 08:00,2012-09-06 17:00,2012-07-24 08:00,2012-09-06 17:00,2012-07-24 08:00,2012-09-06 17:00,,2012-07-23 16:59,2012-09-06 16:59,CS_MSO,PT_Normal,,,,,4fN/0ohrtkGXJvWrtDMXrw,WXLNpk9sVEuqCcpSKWeHsQ,,,N,0,0,,,2012-06-20 10:14,2012-06-20 10:14,admin,admin
1171,145894,5115,23006,794,1,0,N,N,N,CP_Drtn,TT_Task,DT_FixedDUR2,RV_OK,TK_NotStart,PRE62,Cathodic Protection,,-0.016667,1000,360,0,0,0,360,0,0,0,2012-05-23 17:00,,,2012-05-23 16:59,2012-07-07 16:59,,2012-05-24 08:00,2012-07-07 17:00,2012-05-24 08:00,2012-07-07 17:00,2012-05-24 08:00,2012-07-07 17:00,,2012-05-23 16:59,2012-07-07 16:59,CS_MSO,PT_Normal,,,,,eveqBXIik0iT74aPZLoRcQ,rBAMXE1Xckm5NRjyKElk1A,,,N,0,0,,,2012-06-20 10:14,2012-06-20 10:14,admin,admin
1172,145895,5115,23006,794,1,0,N,N,N,CP_Drtn,TT_Task,DT_FixedDUR2,RV_OK,TK_NotStart,PRE63,Solar Power,,-0.016667,912,360,0,0,0,360,0,0,0,2012-06-03 17:00,,,2012-06-03 16:59,2012-07-18 16:59,,2012-06-04 08:00,2012-07-18 17:00,2012-06-04 08:00,2012-07-18 17:00,2012-06-04 08:00,2012-07-18 17:00,,2012-06-03 16:59,2012-07-18 16:59,CS_MSO,PT_Normal,,,,,aFQ7l5py70uB5gpEtcZ41Q,224lD4coJkG9lmldOcMgGw,,,N,0,0,,,2012-06-20 10:14,2012-06-20 10:14,admin,admin
1173,145896,5115,23007,794,1,0,N,N,N,CP_Drtn,TT_Task,DT_FixedDUR2,RV_OK,TK_NotStart,PRE34,F&G Detector,,-0.016667,648,360,0,0,0,360,0,0,0,2012-07-06 17:00,,,2012-07-06 16:59,2012-08-20 16:59,,2012-07-07 08:00,2012-08-20 17:00,2012-07-07 08:00,2012-08-20 17:00,2012-07-07 08:00,2012-08-20 17:00,,2012-07-06 16:59,2012-08-20 16:59,CS_MSO,PT_Normal,,,,,AaLE54vMmEGK07YwOUD0lA,GNiZoWepJkyQLU1cno9RoA,,,N,0,0,,,2012-06-20 10:14,2012-06-20 10:14,admin,admin
1174,145897,5115,23007,794,1,0,N,N,N,CP_Drtn,TT_Task,DT_FixedDUR2,RV_OK,TK_NotStart,PRE35,Fire fighting system,,-0.016667,720,360,0,0,0,360,0,0,0,2012-06-27 17:00,,,2012-06-27 16:59,2012-08-11 16:59,,2012-06-28 08:00,2012-08-11 17:00,2012-06-28 08:00,2012-08-11 17:00,2012-06-28 08:00,2012-08-11 17:00,,2012-06-27 16:59,2012-08-11 16:59,CS_MSO,PT_Normal,,,,,VuBpsEB3602pE6saZBtsIg,A2Ms5fr0LkmjeEO9wddbSw,,,N,0,0,,,2012-06-20 10:14,2012-06-20 10:14,admin,admin
1175,145898,5115,23007,794,1,0,N,N,N,CP_Drtn,TT_Task,DT_FixedDUR2,RV_OK,TK_NotStart,PRE36,Life Saving Equipment,,-0.016667,664,360,0,0,0,360,0,0,0,2012-07-04 17:00,,,2012-07-04 16:59,2012-08-18 16:59,,2012-07-05 08:00,2012-08-18 17:00,2012-07-05 08:00,2012-08-18 17:00,2012-07-05 08:00,2012-08-18 17:00,,2012-07-04 16:59,2012-08-18 16:59,CS_MSO,PT_Normal,,,,,zQ5H6EdZpEWwrn+g+WjrFw,ldIBOpgah0a/lR8E0LDWiA,,,N,0,0,,,2012-06-20 10:14,2012-06-20 10:14,admin,admin
1176,145899,5115,23008,794,1,0,N,N,N,CP_Drtn,TT_Task,DT_FixedDUR2,RV_OK,TK_NotStart,PRE39,Instrument Electical Bulk,,-0.016667,624,240,0,0,0,240,0,0,0,2012-07-24 17:00,,,2012-07-24 16:59,2012-08-23 16:59,,2012-07-25 08:00,2012-08-23 17:00,2012-07-25 08:00,2012-08-23 17:00,2012-07-25 08:00,2012-08-23 17:00,,2012-07-24 16:59,2012-08-23 16:59,CS_MSO,PT_Normal,,,,,xySR0yl9XkCXsKF5N39/9g,ZOlQpD0j6k2Oje25cdeLIw,,,N,0,0,,,2012-06-20 10:14,2012-06-20 10:14,admin,admin
1177,145900,5115,23008,794,1,0,N,N,N,CP_Drtn,TT_Task,DT_FixedDUR2,RV_OK,TK_NotStart,PRE40,Instrument Mechanical Bulk,,-0.016667,640,280,0,0,0,280,0,0,0,2012-07-17 17:00,,,2012-07-17 16:59,2012-08-21 16:59,,2012-07-18 08:00,2012-08-21 17:00,2012-07-18 08:00,2012-08-21 17:00,2012-07-18 08:00,2012-08-21 17:00,,2012-07-17 16:59,2012-08-21 16:59,CS_MSO,PT_Normal,,,,,2MkyrD1nf0iIdRhfmdTfnw,CONbT0M6vUqQSnyT17w0og,,,N,0,0,,,2012-06-20 10:14,2012-06-20 10:14,admin,admin
1178,145901,5115,23008,794,1,0,N,N,N,CP_Drtn,TT_Task,DT_FixedDUR2,RV_OK,TK_NotStart,PRE71,Field Instrument,,-0.016667,760,360,0,0,0,360,0,0,0,2012-06-22 17:00,,,2012-06-22 16:59,2012-08-06 16:59,,2012-06-23 08:00,2012-08-06 17:00,2012-06-23 08:00,2012-08-06 17:00,2012-06-23 08:00,2012-08-06 17:00,,2012-06-22 16:59,2012-08-06 16:59,CS_MSO,PT_Normal,,,,,6tWoHvRXSUCeT822UMwzhA,w5X6gbh04UW3W5Wq+rSQBg,,,N,0,0,,,2012-06-20 10:14,2012-06-20 10:14,admin,admin
1179,145902,5115,23008,794,1,0,N,N,N,CP_Drtn,TT_Task,DT_FixedDUR2,RV_OK,TK_NotStart,PRE72,multi phase flow meter,,-0.016667,1095,456,0,0,0,456,0,0,0,2012-07-17 17:00,,,2012-07-17 16:59,2012-09-12 16:59,,2012-07-18 08:00,2012-09-12 17:00,2012-07-18 08:00,2012-09-12 17:00,2012-07-18 08:00,2012-09-12 17:00,,2012-07-17 16:59,2012-09-12 16:59,CS_MSO,PT_Normal,,,,,wuEHdmn5+EqvwDL6xnGQsw,uuNDwlD4PUKH8xd4UATKSA,,,N,0,0,,,2012-06-20 10:14,2012-06-20 10:14,admin,admin
1180,145903,5115,23008,794,1,0,N,N,N,CP_Drtn,TT_Task,DT_FixedDUR2,RV_OK,TK_NotStart,PRE73,Safe Guard system,,-0.016667,1063,240,0,0,0,240,0,0,0,2012-08-17 17:00,,,2012-08-17 16:59,2012-09-16 16:59,,2012-08-18 08:00,2012-09-16 17:00,2012-08-18 08:00,2012-09-16 17:00,2012-08-18 08:00,2012-09-16 17:00,,2012-08-17 16:59,2012-09-16 16:59,CS_MSO,PT_Normal,,,,,e8/WKip8Eke9xklB65VIyw,itaIeWskBUuoh6CM3axILA,,,N,0,0,,,2012-06-20 10:14,2012-06-20 10:14,admin,admin
1181,145904,5115,22991,5686,1,0,N,N,N,CP_Drtn,TT_Task,DT_FixedDUR2,RV_OK,TK_NotStart,JK31,"Jacket , Boat Landing Fabrication & Painting",,208,0,1400,0,0,0,1400,0,0,0,,,,2012-07-22 08:00,2013-02-24 16:00,,2012-06-21 08:00,2013-01-22 16:00,2012-06-21 08:00,2013-01-22 16:00,2012-06-21 08:00,2013-01-22 16:00,,2012-07-22 08:00,2013-02-24 16:00,,PT_Normal,,,,,DVTHtIgVuEy3BfufrrhCrA,zGKHlJO9h0ufFBInYTxRrA,,,N,0,0,,,2012-06-20 10:14,2012-06-20 10:14,admin,admin
1182,145905,5115,22991,5686,1,0,N,N,N,CP_Drtn,TT_Task,DT_FixedDUR2,RV_OK,TK_NotStart,JK32,Piles Fabrication & Marking,,592,592,1000,0,0,0,1000,0,0,0,,,,2012-11-08 08:00,2013-04-07 16:00,,2012-08-06 08:00,2013-01-08 16:00,2012-08-06 08:00,2013-01-08 16:00,2012-08-06 08:00,2013-01-08 16:00,,2012-11-08 08:00,2013-04-07 16:00,,PT_Normal,,,,,F68+qfAzT0uH64VdEV7Y1w,8yP1p3vGb0C5fjxlQvUcfw,,,N,0,0,,,2012-06-20 10:14,2012-06-20 10:14,admin,admin
1183,145906,5115,23001,5686,1,0,N,N,N,CP_Drtn,TT_Task,DT_FixedDUR2,RV_OK,TK_NotStart,DS031,Fabrication and Painting of Below Production Deck/Legs,,0,0,840,0,0,0,840,0,0,0,,,,2012-06-13 08:00,2012-10-18 16:00,,2012-06-13 08:00,2012-10-18 16:00,2012-06-13 08:00,2012-10-18 16:00,2012-06-13 08:00,2012-10-18 16:00,,2012-06-13 08:00,2012-10-18 16:00,,PT_Normal,,,,,fsRrIuse7ESUo1IH9CNiEg,h/MVry+KeEKwqKSfSZZSbA,,,Y,0,0,,,2012-06-20 10:14,2012-06-20 10:14,admin,admin
1184,145907,5115,23001,5686,1,0,N,N,N,CP_Drtn,TT_Task,DT_FixedDUR2,RV_OK,TK_NotStart,DS032,Fabrication and Painting of Production Deck,,0,0,960,0,0,0,960,0,0,0,,,,2012-06-13 08:00,2012-11-08 16:00,,2012-06-13 08:00,2012-11-08 16:00,2012-06-13 08:00,2012-11-08 16:00,2012-06-13 08:00,2012-11-08 16:00,,2012-06-13 08:00,2012-11-08 16:00,,PT_Normal,,,,,yPB23yFWmk2N9gjTHB5KPw,PtBKaXvQuUSuBlQPpQvcgw,,,Y,0,0,,,2012-06-20 10:14,2012-06-20 10:14,admin,admin
1185,145908,5115,23001,5686,1,0,N,N,N,CP_Drtn,TT_Task,DT_FixedDUR2,RV_OK,TK_NotStart,DS033,Fabrication and Paint of Heli-Deck ( & Lifting if Required),,400,0,960,0,0,0,960,0,0,0,,,,2012-10-29 08:00,2013-03-21 16:00,,2012-08-27 08:00,2013-01-20 16:00,2012-08-27 08:00,2013-01-20 16:00,2012-08-27 08:00,2013-01-20 16:00,,2012-10-29 08:00,2013-03-21 16:00,,PT_Normal,,,,,GKDYbp6P1UO8wDxvPOfAKg,u+lYOixuZEmCroS3jLPeEw,,,N,0,0,,,2012-06-20 10:14,2012-06-20 10:14,admin,admin
1186,145909,5115,23001,5686,1,0,N,N,N,CP_Drtn,TT_Task,DT_FixedDUR2,RV_OK,TK_NotStart,DS034,Lifting Below Production Deck on High Cups,,24,0,40,0,0,0,40,0,0,0,,,,2012-10-23 08:00,2012-10-31 16:00,,2012-10-20 08:00,2012-10-24 16:00,2012-10-20 08:00,2012-10-24 16:00,2012-10-20 08:00,2012-10-24 16:00,,2012-10-23 08:00,2012-10-31 16:00,,PT_Normal,,,,,kdpIJkZLEkWWTRMMgLNt0w,7qUpAXG7dk+8p3OnysDIAQ,,,N,0,0,,,2012-06-20 10:14,2012-06-20 10:14,admin,admin
1187,145910,5115,23001,5686,1,0,N,N,N,CP_Drtn,TT_Task,DT_FixedDUR2,RV_OK,TK_NotStart,DS035,Lifting Production Deck on Below Production Level,,0,0,120,0,0,0,120,0,0,0,,,,2012-11-10 08:00,2012-11-27 16:00,,2012-11-10 08:00,2012-11-27 16:00,2012-11-10 08:00,2012-11-27 16:00,2012-11-10 08:00,2012-11-27 16:00,,2012-11-10 08:00,2012-11-27 16:00,,PT_Normal,,,,,5Zo4Pbz6b0q5nJgX9gxdqA,pvhdQ+zLoUGlsGsHJLF0kg,,,Y,0,0,,,2012-06-20 10:14,2012-06-20 10:14,admin,admin
1188,145911,5115,23001,5686,1,0,N,N,N,CP_Drtn,TT_Task,DT_FixedDUR2,RV_OK,TK_NotStart,DS036,Fabrication & Installation of Deck Str. Miscellence / Padeyes,,80,24,960,0,0,0,960,0,0,0,,,,2012-10-17 08:00,2013-03-13 16:00,,2012-10-04 08:00,2013-03-02 16:00,2012-10-04 08:00,2013-03-02 16:00,2012-10-04 08:00,2013-03-02 16:00,,2012-10-17 08:00,2013-03-13 16:00,,PT_Normal,,,,,s87sY1yERkOKx551K1VlfA,or5G+IMdSky8NZLBdVW8xQ,,,N,0,0,,,2012-06-20 10:14,2012-06-20 10:14,admin,admin
1189,145912,5115,23001,5686,0,0,N,N,N,CP_Drtn,TT_FinMile,DT_FixedDrtn,RV_OK,TK_NotStart,DS037,Physical Weighting,,80,0,0,0,0,0,0,0,0,0,,,,2013-03-06 16:00,2013-03-06 16:00,,2013-02-23 16:00,2013-02-23 16:00,2013-02-23 16:00,2013-02-23 16:00,2013-02-23 16:00,2013-02-23 16:00,,2013-03-06 16:00,2013-03-06 16:00,,PT_Normal,,,,,s+nOCIBZbUeSQuiUaena2Q,JGpic5NftEGkYFLxWQfh6Q,,,N,0,0,,,2012-06-20 10:14,2012-06-20 10:14,admin,admin
1190,145913,5115,23001,5686,1,0,N,N,N,CP_Drtn,TT_Task,DT_FixedDUR2,RV_OK,TK_NotStart,DS038,Clearanse of structure (Fab. & Painting ) Punch List,,56,56,168,0,0,0,168,0,0,0,,,,2013-03-14 08:00,2013-04-07 16:00,,2013-03-06 08:00,2013-03-30 16:00,2013-03-06 08:00,2013-03-30 16:00,2013-03-06 08:00,2013-03-30 16:00,,2013-03-14 08:00,2013-04-07 16:00,,PT_Normal,,,,,cYCXgiEPPUmt4+SxvYeVqg,UIxplIh3eEeSSoKUHZsCug,,,N,0,0,,,2012-06-20 10:14,2012-06-20 10:14,admin,admin
1191,145914,5115,23024,5686,1,0,N,N,N,CP_Drtn,TT_Task,DT_FixedDUR2,RV_OK,TK_NotStart,TFS031,Piping and Piping Supports Fabrication and Painting,,320,320,800,0,0,0,800,0,0,0,,,,2012-09-10 08:00,2013-01-10 16:00,,2012-07-21 08:00,2012-11-24 16:00,2012-07-21 08:00,2012-11-24 16:00,2012-07-21 08:00,2012-11-24 16:00,,2012-09-10 08:00,2013-01-10 16:00,,PT_Normal,,,,,m1nIYOnBd0KzrWjVrI/WGA,Vo+VEHnX1Uib2F6euGIM0g,,,N,0,0,,,2012-06-20 10:14,2012-06-20 10:14,admin,admin
1192,145915,5115,23024,5686,1,0,N,N,N,CP_Drtn,TT_Task,DT_FixedDUR2,RV_OK,TK_NotStart,TSF032,Piping and Piping Supports Erection,,0,0,600,0,0,0,600,0,0,0,,,,2012-11-25 08:00,2013-02-23 16:00,,2012-11-25 08:00,2013-02-23 16:00,2012-11-25 08:00,2013-02-23 16:00,2012-11-25 08:00,2013-02-23 16:00,,2012-11-25 08:00,2013-02-23 16:00,,PT_Normal,,,,,UrOTOqEqf02H3nR8Lo95/A,quyCDFL4eUW8pPpR3D60VQ,,,Y,0,0,,,2012-06-20 10:14,2012-06-20 10:14,admin,admin
1193,145916,5115,23021,5686,1,0,N,N,N,CP_Drtn,TT_Task,DT_FixedDUR2,RV_OK,TK_NotStart,TSF033,Equipment Erection on Below Production Level,,24,24,56,0,0,0,56,0,0,0,,,,2012-11-01 08:00,2012-11-08 16:00,,2012-10-29 08:00,2012-11-05 16:00,2012-10-29 08:00,2012-11-05 16:00,2012-10-29 08:00,2012-11-05 16:00,,2012-11-01 08:00,2012-11-08 16:00,,PT_Normal,,,,,gahkQUTHjUKuHesSgApqhA,Qa6Zp0iH/keaZsqvOalZPQ,,,N,0,0,,,2012-06-20 10:14,2012-06-20 10:14,admin,admin
1194,145917,5115,23021,5686,1,0,N,N,N,CP_Drtn,TT_Task,DT_FixedDUR2,RV_OK,TK_NotStart,TSF034,Equipment Erection on Production Level,,216,216,120,0,0,0,120,0,0,0,,,,2012-12-30 08:00,2013-01-16 16:00,,2012-11-28 08:00,2012-12-15 16:00,2012-11-28 08:00,2012-12-15 16:00,2012-11-28 08:00,2012-12-15 16:00,,2012-12-30 08:00,2013-01-16 16:00,,PT_Normal,,,,,VM8lyw9d00yWuX/v146uQQ,03vCXS0/Y0i+shto1SSNJQ,,,N,0,0,,,2012-06-20 10:14,2012-06-20 10:14,admin,admin
1195,145918,5115,23021,5686,1,0,N,N,N,CP_Drtn,TT_Task,DT_FixedDUR2,RV_OK,TK_NotStart,TSF035,Equipment Erection on Helideck,,400,400,56,0,0,0,56,0,0,0,,,,2013-02-16 08:00,2013-02-23 16:00,,2012-12-16 08:00,2012-12-23 16:00,2012-12-16 08:00,2012-12-23 16:00,2012-12-16 08:00,2012-12-23 16:00,,2013-02-16 08:00,2013-02-23 16:00,,PT_Normal,,,,,AK5WZdKTkEOXK3POeEvLIA,2mIAAJqfL02S54HKn+zoOQ,,,N,0,0,,,2012-06-20 10:14,2012-06-20 10:14,admin,admin
1196,145919,5115,23022,5686,1,0,N,N,N,CP_Drtn,TT_Task,DT_FixedDUR2,RV_OK,TK_NotStart,TS37,E&I Activity,,16,16,720,0,0,0,720,0,0,0,,,,2012-11-12 08:00,2013-02-28 16:00,,2012-11-10 08:00,2013-02-26 16:00,2012-11-10 08:00,2013-02-26 16:00,2012-11-10 08:00,2013-02-26 16:00,,2012-11-12 08:00,2013-02-28 16:00,,PT_Normal,,,,,1hLl0WyLQ0mMZxYqrW78Yg,+j8BLsZNOU+OrJICVK5F1w,,,N,0,0,,,2012-06-20 10:14,2012-06-20 10:14,admin,admin
1197,145920,5115,23023,5686,1,0,N,N,N,CP_Drtn,TT_Task,DT_FixedDUR2,RV_OK,TK_NotStart,TS38,"Pre-commissioning """" Piping Hydrotest , Reinstatment , Megering , Continuity Test and Touch Up """"",,0,0,280,0,0,0,280,0,0,0,,,,2013-02-18 08:00,2013-03-30 16:00,,2013-02-18 08:00,2013-03-30 16:00,2013-02-18 08:00,2013-03-30 16:00,2013-02-18 08:00,2013-03-30 16:00,,2013-02-18 08:00,2013-03-30 16:00,,PT_Normal,,,,,7VJk+tAaoU6MxHjtAMUngw,OTq2jcFatkOlMrI23bWX1Q,,,Y,0,0,,,2012-06-20 10:14,2012-06-20 10:14,admin,admin
1198,145921,5115,22994,5686,1,0,N,N,N,CP_Drtn,TT_Task,DT_FixedDUR2,RV_OK,TK_NotStart,PL31,P/L Spools Fabrication,,832,0,720,0,0,0,720,0,0,0,,,,2012-11-07 08:00,2013-02-24 16:00,,2012-06-30 08:00,2012-10-17 16:00,2012-06-30 08:00,2012-10-17 16:00,2012-06-30 08:00,2012-10-17 16:00,,2012-11-07 08:00,2013-02-24 16:00,,PT_Normal,,,,,ZuG5PjudjEKhIpFDwyLMGw,fNpyI06rOEST5I8j8iDnuA,,,N,0,0,,,2012-06-20 10:14,2012-06-20 10:14,admin,admin
1199,145922,5115,22996,5686,0,0,N,N,N,CP_Drtn,TT_Mile,DT_FixedDrtn,RV_OK,TK_NotStart,LOPS71,Arrival of 01st Shipment Material Barge ( P/L Spools),,0,128,0,0,0,0,0,0,0,0,2012-09-15 08:00,,,2012-09-15 08:00,2012-09-15 08:00,,2012-09-15 08:00,2012-09-15 08:00,2012-09-15 08:00,2012-09-15 08:00,2012-09-15 08:00,2012-09-15 08:00,,2012-09-15 08:00,2012-09-15 08:00,CS_MSO,PT_Normal,,,,,CGIjvpHiJEqFqgsEfdTw8g,xehV9+x7ZE2jS/zzmhzWQA,,,N,0,0,,,2012-06-20 10:14,2012-06-20 10:14,admin,admin
1200,145923,5115,22996,5686,1,0,N,N,N,CP_Drtn,TT_Task,DT_FixedDUR2,RV_OK,TK_NotStart,LOPS72,1st Shipment Material Barge Preparation,,1088,0,96,0,0,0,96,0,0,0,,,,2013-03-20 08:00,2013-04-02 16:00,,2012-10-03 08:00,2012-10-17 16:00,2012-10-03 08:00,2012-10-17 16:00,2012-10-03 08:00,2012-10-17 16:00,,2013-03-20 08:00,2013-04-02 16:00,,PT_Normal,,,,,mynJaRfibkC7jOGOmEwq0A,ndqnrpRNm0Kh7Ee9x77pLg,,,N,0,0,,,2012-06-20 10:14,2012-06-20 10:14,admin,admin
1201,145924,5115,22996,5686,1,0,N,N,N,CP_Drtn,TT_Task,DT_FixedDUR2,RV_OK,TK_NotStart,LOPS73,"L/O & Sea Fastening (P/L Spools 18"""" & 8"""")",,1088,0,32,0,0,0,32,0,0,0,,,,2013-04-03 08:00,2013-04-07 16:00,,2012-10-18 08:00,2012-10-22 16:00,2012-10-18 08:00,2012-10-22 16:00,2012-10-18 08:00,2012-10-22 16:00,,2013-04-03 08:00,2013-04-07 16:00,,PT_Normal,,,,,Fvsg0cOIC02Zr/JWAJUTlg,kp9L75XeSkWVYE8hGyBpLQ,,,N,0,0,,,2012-06-20 10:14,2012-06-20 10:14,admin,admin
1202,145925,5115,22997,5686,0,0,N,N,N,CP_Drtn,TT_Mile,DT_FixedDrtn,RV_OK,TK_NotStart,LOJK71,Arrival of 02nd Shipment Material Barge ( Jacket and Piles ),,0,263.983333,0,0,0,0,0,0,0,0,2012-12-01 08:01,,,2012-12-01 08:01,2012-12-01 08:01,,2012-12-01 08:01,2012-12-01 08:01,2012-12-01 08:01,2012-12-01 08:01,2012-12-01 08:01,2012-12-01 08:01,,2012-12-01 08:01,2012-12-01 08:01,CS_MSO,PT_Normal,,,,,CVL9d5degkmXjldaz2u/Yg,/rdQ3u43Y0aVeyWgwwuYrQ,,,N,0,0,,,2012-06-20 10:14,2012-06-20 10:14,admin,admin
1203,145926,5115,22997,5686,1,0,N,N,N,CP_Drtn,TT_Task,DT_FixedDUR2,RV_OK,TK_NotStart,LOJK72,02nd Shipment Material Barge Preparation,,208,0,96,0,0,0,96,0,0,0,,,,2013-02-11 08:00,2013-02-24 16:00,,2013-01-09 08:00,2013-01-22 16:00,2013-01-09 08:00,2013-01-22 16:00,2013-01-09 08:00,2013-01-22 16:00,,2013-02-11 08:00,2013-02-24 16:00,,PT_Normal,,,,,wci1S7h+RkGWC6wLPDECyA,S7wGNTJDfUW+8AjycDcj2g,,,N,0,0,,,2012-06-20 10:14,2012-06-20 10:14,admin,admin
1204,145927,5115,22997,5686,1,0,N,N,N,CP_Drtn,TT_Task,DT_FixedDUR2,RV_OK,TK_NotStart,LOJK73,L/O & Sea fastening ( Jacket & Piles ),,208,0,56,0,0,0,56,0,0,0,,,,2013-02-25 08:00,2013-03-04 16:00,,2013-01-23 08:00,2013-01-31 16:00,2013-01-23 08:00,2013-01-31 16:00,2013-01-23 08:00,2013-01-31 16:00,,2013-02-25 08:00,2013-03-04 16:00,,PT_Normal,,,,,r8HymLlPjEC8lDp+7SFyMA,T2pkffL22UqmUBjuIecM7w,,,N,0,0,,,2012-06-20 10:14,2012-06-20 10:14,admin,admin
1205,145928,5115,22993,5686,0,0,N,N,N,CP_Drtn,TT_Mile,DT_FixedDrtn,RV_OK,TK_NotStart,LODK71,Arrival of 03rd Shipment Material Barge ( Deck C/W TSF ),,-0.016667,104,0,0,0,0,0,0,0,0,2013-03-01 08:01,,,2013-02-28 15:59,2013-02-28 15:59,,2013-03-02 08:00,2013-03-02 08:00,2013-03-02 08:00,2013-03-02 08:00,2013-03-02 08:00,2013-03-02 08:00,,2013-02-28 15:59,2013-02-28 15:59,CS_MSO,PT_Normal,,,,,lDGS8T4/I0qLI8/RRQNAIg,+yVxVOPraUyK1NRhdp+wfA,,,N,0,0,,,2012-06-20 10:14,2012-06-20 10:14,admin,admin
1206,145929,5115,22993,5686,1,0,N,N,N,CP_Drtn,TT_Task,DT_FixedDUR2,RV_OK,TK_NotStart,LODK72,3rd Shipment Material Barge Preparation,,0,0,96,0,0,0,96,0,0,0,,,,2013-03-17 08:00,2013-03-30 16:00,,2013-03-17 08:00,2013-03-30 16:00,2013-03-17 08:00,2013-03-30 16:00,2013-03-17 08:00,2013-03-30 16:00,,2013-03-17 08:00,2013-03-30 16:00,,PT_Normal,,,,,B5qDjyUXNEKDyAIf3E4UoA,udpKSE0PREWpEz84cupRDw,,,Y,0,0,,,2012-06-20 10:14,2012-06-20 10:14,admin,admin
1207,145930,5115,22993,5686,1,0,N,N,N,CP_Drtn,TT_Task,DT_FixedDUR2,RV_OK,TK_NotStart,LODK73,L/O & Sea fastening ( Deck),,0,0,56,0,0,0,56,0,0,0,,,,2013-03-31 08:00,2013-04-07 16:00,,2013-03-31 08:00,2013-04-07 16:00,2013-03-31 08:00,2013-04-07 16:00,2013-03-31 08:00,2013-04-07 16:00,,2013-03-31 08:00,2013-04-07 16:00,,PT_Normal,,,,,JwIDV5N6x02V6n5bBwe77g,InSRN6FydkWjBf3988Pjxg,,,Y,0,0,,,2012-06-20 10:14,2012-06-20 10:14,admin,admin
1208,145931,5115,22986,794,1,0,N,N,N,CP_Drtn,TT_Task,DT_FixedDrtn,RV_OK,TK_NotStart,PRP72,"Pipeline 8"""" & Fittings",,-0.016667,2087,408,0,0,0,408,0,0,0,2012-05-30 17:00,,,2012-05-30 16:59,2012-07-20 16:59,,2012-05-31 08:00,2012-07-20 17:00,2012-05-31 08:00,2012-07-20 17:00,2012-05-31 08:00,2012-07-20 17:00,,2012-05-30 16:59,2012-07-20 16:59,CS_MSO,PT_Normal,,,,,yyJCgjBvIkC0PBBBFB4TVA,9oZfFZekBkiGUClhj5HB5A,,,N,0,0,,,2012-06-20 10:14,2012-06-20 10:14,admin,admin
1209,145932,5115,23001,5686,1,0,N,N,N,CP_Drtn,TT_Task,DT_FixedDUR2,RV_OK,TK_NotStart,DS041,Fabrication and Painting of Below Production Deck/Legs,,0,0,840,0,0,0,840,0,0,0,,,,2012-06-13 08:00,2012-10-18 16:00,,2012-06-13 08:00,2012-10-18 16:00,2012-06-13 08:00,2012-10-18 16:00,2012-06-13 08:00,2012-10-18 16:00,,2012-06-13 08:00,2012-10-18 16:00,,PT_Normal,,,,,ZRuudyPLrESYqsU+kAe4Wg,YDhnGt4WSampcAcCK/B2gQ,,,Y,0,0,,,2012-06-20 10:18,2012-06-20 10:18,admin,admin
1210,145933,5115,23001,5686,1,0,N,N,N,CP_Drtn,TT_Task,DT_FixedDUR2,RV_OK,TK_NotStart,DS042,Fabrication and Painting of Production Deck,,0,0,960,0,0,0,960,0,0,0,,,,2012-06-13 08:00,2012-11-08 16:00,,2012-06-13 08:00,2012-11-08 16:00,2012-06-13 08:00,2012-11-08 16:00,2012-06-13 08:00,2012-11-08 16:00,,2012-06-13 08:00,2012-11-08 16:00,,PT_Normal,,,,,rOB6Fb493kqJg2FlHB4adA,xFi93CoKSi++4GmIMxpP9w,,,Y,0,0,,,2012-06-20 10:18,2012-06-20 10:18,admin,admin
1211,145934,5115,23001,5686,1,0,N,N,N,CP_Drtn,TT_Task,DT_FixedDUR2,RV_OK,TK_NotStart,DS043,Fabrication and Paint of Heli-Deck ( & Lifting if Required),,400,0,960,0,0,0,960,0,0,0,,,,2012-10-29 08:00,2013-03-21 16:00,,2012-08-27 08:00,2013-01-20 16:00,2012-08-27 08:00,2013-01-20 16:00,2012-08-27 08:00,2013-01-20 16:00,,2012-10-29 08:00,2013-03-21 16:00,,PT_Normal,,,,,TVvjrNrrF0uhrp+JLyGiVA,rvAg4dTFTzOC9LQPbMvlVA,,,N,0,0,,,2012-06-20 10:18,2012-06-20 10:18,admin,admin
1212,145935,5115,23001,5686,1,0,N,N,N,CP_Drtn,TT_Task,DT_FixedDUR2,RV_OK,TK_NotStart,DS044,Lifting Below Production Deck on High Cups,,24,0,40,0,0,0,40,0,0,0,,,,2012-10-23 08:00,2012-10-31 16:00,,2012-10-20 08:00,2012-10-24 16:00,2012-10-20 08:00,2012-10-24 16:00,2012-10-20 08:00,2012-10-24 16:00,,2012-10-23 08:00,2012-10-31 16:00,,PT_Normal,,,,,BPchSDUfDE65xN1hlNpQkQ,bQ+CxC0TQriVcwNqie/vXQ,,,N,0,0,,,2012-06-20 10:18,2012-06-20 10:18,admin,admin
1213,145936,5115,23001,5686,1,0,N,N,N,CP_Drtn,TT_Task,DT_FixedDUR2,RV_OK,TK_NotStart,DS045,Lifting Production Deck on Below Production Level,,0,0,120,0,0,0,120,0,0,0,,,,2012-11-10 08:00,2012-11-27 16:00,,2012-11-10 08:00,2012-11-27 16:00,2012-11-10 08:00,2012-11-27 16:00,2012-11-10 08:00,2012-11-27 16:00,,2012-11-10 08:00,2012-11-27 16:00,,PT_Normal,,,,,ReMni1JhJEapVTq6+MjNXg,kvv6UChdRT2TML26fqP2Og,,,Y,0,0,,,2012-06-20 10:18,2012-06-20 10:18,admin,admin
1214,145937,5115,23001,5686,1,0,N,N,N,CP_Drtn,TT_Task,DT_FixedDUR2,RV_OK,TK_NotStart,DS046,Fabrication & Installation of Deck Str. Miscellence / Padeyes,,80,24,960,0,0,0,960,0,0,0,,,,2012-10-17 08:00,2013-03-13 16:00,,2012-10-04 08:00,2013-03-02 16:00,2012-10-04 08:00,2013-03-02 16:00,2012-10-04 08:00,2013-03-02 16:00,,2012-10-17 08:00,2013-03-13 16:00,,PT_Normal,,,,,rCqdLfwEzk+Sy95VvT92zQ,CWEx43mfRrCS6ZOEt8Q5OA,,,N,0,0,,,2012-06-20 10:18,2012-06-20 10:18,admin,admin
1215,145938,5115,23001,5686,0,0,N,N,N,CP_Drtn,TT_FinMile,DT_FixedDrtn,RV_OK,TK_NotStart,DS047,Physical Weighting,,80,0,0,0,0,0,0,0,0,0,,,,2013-03-06 16:00,2013-03-06 16:00,,2013-02-23 16:00,2013-02-23 16:00,2013-02-23 16:00,2013-02-23 16:00,2013-02-23 16:00,2013-02-23 16:00,,2013-03-06 16:00,2013-03-06 16:00,,PT_Normal,,,,,m9g+10tS0UGjnRmWFuXvWw,dU19c7ngSBGK2PpNjJWMWA,,,N,0,0,,,2012-06-20 10:18,2012-06-20 10:18,admin,admin
1216,145939,5115,23021,5686,1,0,N,N,N,CP_Drtn,TT_Task,DT_FixedDUR2,RV_OK,TK_NotStart,TSF043,Equipment Erection on Below Production Level,,24,24,56,0,0,0,56,0,0,0,,,,2012-11-01 08:00,2012-11-08 16:00,,2012-10-29 08:00,2012-11-05 16:00,2012-10-29 08:00,2012-11-05 16:00,2012-10-29 08:00,2012-11-05 16:00,,2012-11-01 08:00,2012-11-08 16:00,,PT_Normal,,,,,lECe4OOimk2mqK3lsz7Z9g,LQiCxK3/v0WUQtxj4/eZtw,,,N,0,0,,,2012-06-20 10:30,2012-06-20 10:30,admin,admin
1217,145940,5115,23021,5686,1,0,N,N,N,CP_Drtn,TT_Task,DT_FixedDUR2,RV_OK,TK_NotStart,TSF044,Equipment Erection on Production Level,,216,216,120,0,0,0,120,0,0,0,,,,2012-12-30 08:00,2013-01-16 16:00,,2012-11-28 08:00,2012-12-15 16:00,2012-11-28 08:00,2012-12-15 16:00,2012-11-28 08:00,2012-12-15 16:00,,2012-12-30 08:00,2013-01-16 16:00,,PT_Normal,,,,,ApXd9hcgeEC+syj4W3Sw9Q,f3d6itKKc0eAsKFsmlMw9g,,,N,0,0,,,2012-06-20 10:30,2012-06-20 10:30,admin,admin
1218,145941,5115,23021,5686,1,0,N,N,N,CP_Drtn,TT_Task,DT_FixedDUR2,RV_OK,TK_NotStart,TSF045,Equipment Erection on Helideck,,400,400,56,0,0,0,56,0,0,0,,,,2013-02-16 08:00,2013-02-23 16:00,,2012-12-16 08:00,2012-12-23 16:00,2012-12-16 08:00,2012-12-23 16:00,2012-12-16 08:00,2012-12-23 16:00,,2013-02-16 08:00,2013-02-23 16:00,,PT_Normal,,,,,94tGeVJ8xkS19mH/uEYGgg,aUBY6CFV5USUmrHmKoFEjw,,,N,0,0,,,2012-06-20 10:30,2012-06-20 10:30,admin,admin
1219,145942,5115,22987,5686,0,0,N,N,N,CP_Drtn,TT_FinMile,DT_FixedDrtn,RV_OK,TK_NotStart,GM41,Reciving Fax of Award,,-0.016667,0,0,0,0,0,0,0,0,0,2012-01-20 16:00,,,2012-01-19 16:00,2012-01-19 16:00,,2012-01-21 08:01,2012-01-21 08:01,2012-01-21 08:01,2012-01-21 08:01,2012-01-21 08:01,2012-01-21 08:01,,2012-01-19 16:00,2012-01-19 16:00,CS_MEO,PT_Normal,,,,,nWWZlCWXDk2jARK/8a17KQ,,,,N,0,0,,,2012-06-20 11:04,2012-06-20 11:04,admin,admin
1220,145943,5115,22987,5686,0,0,N,N,N,CP_Drtn,TT_Mile,DT_FixedDrtn,RV_OK,TK_NotStart,GM42,Project Fab. Start,,1951.983333,1952,0,0,0,0,0,0,0,0,,,,2013-04-07 15:59,2013-04-07 15:59,,2012-06-13 08:00,2012-06-13 08:00,2012-06-13 08:00,2012-06-13 08:00,2012-06-13 08:00,2012-06-13 08:00,,2013-04-07 15:59,2013-04-07 15:59,,PT_Normal,,,,,hYNjTKquAEqifBxvND9sbQ,,,,N,0,0,,,2012-06-20 11:04,2012-06-20 11:04,admin,admin
1221,145944,5115,22987,5686,0,0,N,N,N,CP_Drtn,TT_Mile,DT_FixedDrtn,RV_OK,TK_NotStart,GM44,Ready for Load out ( 02nd Shipment/ Jacket & Piles ),,208,208,0,0,0,0,0,0,0,0,,,,2013-02-25 08:00,2013-02-25 08:00,,2013-01-23 08:00,2013-01-23 08:00,2013-01-23 08:00,2013-01-23 08:00,2013-01-23 08:00,2013-01-23 08:00,,2013-02-25 08:00,2013-02-25 08:00,,PT_Normal,,,,,0iQ+3zctd0GFfo9Y7donWA,,,,N,0,0,,,2012-06-20 11:04,2012-06-20 11:04,admin,admin
1222,145945,5115,22987,5686,0,0,N,N,N,CP_Drtn,TT_Mile,DT_FixedDrtn,RV_OK,TK_NotStart,GM45,Ready for Load out ( 03rd Shipment/ Deck C/W TSF ),,55.983333,56,0,0,0,0,0,0,0,0,,,,2013-04-07 15:59,2013-04-07 15:59,,2013-03-31 08:00,2013-03-31 08:00,2013-03-31 08:00,2013-03-31 08:00,2013-03-31 08:00,2013-03-31 08:00,,2013-04-07 15:59,2013-04-07 15:59,,PT_Normal,,,,,gNqf5sybCUm+ZALoHgPpUA,,,,N,0,0,,,2012-06-20 11:04,2012-06-20 11:04,admin,admin
1223,145946,5115,22987,5686,0,0,N,N,N,CP_Drtn,TT_Mile,DT_FixedDrtn,RV_OK,TK_NotStart,GM43,"Ready for Load out (01st Shipment / Pipeline Spools 18"""" & 8"""")",,1119.983333,1120,0,0,0,0,0,0,0,0,,,,2013-04-07 15:59,2013-04-07 15:59,,2012-10-18 08:00,2012-10-18 08:00,2012-10-18 08:00,2012-10-18 08:00,2012-10-18 08:00,2012-10-18 08:00,,2013-04-07 15:59,2013-04-07 15:59,,PT_Normal,,,,,whZR4inSnEGCiKZl2n6uBg,,,,N,0,0,,,2012-06-20 11:04,2012-06-20 11:04,admin,admin
1224,145947,5115,23011,794,1,0,N,N,N,CP_Drtn,TT_Task,DT_FixedDrtn,RV_OK,TK_NotStart,ENS43,Receiving Jacket Primary & Secondary Steel IFC DWG`s,,0,0,1104,0,0,0,1104,0,0,0,2011-11-30 08:01,,,2011-11-30 08:01,2012-04-16 08:01,,2011-11-30 08:01,2012-04-16 08:01,2011-11-30 08:01,2012-04-16 08:01,2011-11-30 08:01,2012-04-16 08:01,,2011-11-30 08:01,2012-04-16 08:01,CS_MSO,PT_Normal,,,,,cIgFUJ1Jo0SHt5Tx3NmpKg,,,,N,0,0,,,2012-06-20 11:04,2012-06-20 11:04,admin,admin
1225,145948,5115,23011,794,0,0,N,N,N,CP_Drtn,TT_FinMile,DT_FixedDrtn,RV_OK,TK_NotStart,ENS44,Receiving Piles IFC DWG`s,,0,720,0,0,0,0,0,0,0,0,2012-01-17 08:01,,,2012-01-17 08:01,2012-01-17 08:01,,2012-01-17 08:01,2012-01-17 08:01,2012-01-17 08:01,2012-01-17 08:01,2012-01-17 08:01,2012-01-17 08:01,,2012-01-17 08:01,2012-01-17 08:01,CS_MEO,PT_Normal,,,,,DMlyOdV0sUefu5thtjGxEQ,,,,N,0,0,,,2012-06-20 11:04,2012-06-20 11:04,admin,admin
1226,145949,5115,23011,794,1,0,N,N,N,CP_Drtn,TT_Task,DT_FixedDUR2,RV_OK,TK_NotStart,ENS45,Receiving Deck Str. Primary & Secondary IFC DWG`s,,0,224,328,0,0,0,328,0,0,0,2012-02-07 08:01,,,2012-02-07 08:01,2012-03-19 08:01,,2012-02-07 08:01,2012-03-19 08:01,2012-02-07 08:01,2012-03-19 08:01,2012-02-07 08:01,2012-03-19 08:01,,2012-02-07 08:01,2012-03-19 08:01,CS_MSO,PT_Normal,,,,,HBc0uj1tzUCM4kO0t6GE3w,,,,N,0,0,,,2012-06-20 11:04,2012-06-20 11:04,admin,admin
1227,145950,5115,23011,794,0,0,N,N,N,CP_Drtn,TT_FinMile,DT_FixedDrtn,RV_OK,TK_NotStart,ENS41,"Receiving Final Jacket , Boat Land & Piles MTO",,135.983333,135.983333,0,0,0,0,0,0,0,0,,,,2012-02-14 17:00,2012-02-14 17:00,,2012-01-29 08:01,2012-01-29 08:01,2012-01-29 08:01,2012-01-29 08:01,2012-01-29 08:01,2012-01-29 08:01,,2012-02-14 17:00,2012-02-14 17:00,,PT_Normal,,,,,+cVkBJmzRE27gKk0WwVtCw,,,,N,0,0,,,2012-06-20 11:04,2012-06-20 11:04,admin,admin
1228,145951,5115,23011,794,0,0,N,N,N,CP_Drtn,TT_FinMile,DT_FixedDrtn,RV_OK,TK_NotStart,ENS42,Receiving Final Deck Str. MTO,,135.983333,135.983333,0,0,0,0,0,0,0,0,,,,2012-02-14 17:00,2012-02-14 17:00,,2012-01-29 08:01,2012-01-29 08:01,2012-01-29 08:01,2012-01-29 08:01,2012-01-29 08:01,2012-01-29 08:01,,2012-02-14 17:00,2012-02-14 17:00,,PT_Normal,,,,,V0YRD7ib30O8nAu9/lmEhA,,,,N,0,0,,,2012-06-20 11:04,2012-06-20 11:04,admin,admin
1229,145952,5115,23011,794,1,0,N,N,N,CP_Drtn,TT_Task,DT_FixedDrtn,RV_OK,TK_NotStart,ENS48,Receiving IFC Equipment fixation DWG`s,,0,1559.983333,104,0,0,0,104,0,0,0,2012-04-04 08:01,,,2012-04-04 08:01,2012-04-17 08:01,,2012-04-04 08:01,2012-04-17 08:01,2012-04-04 08:01,2012-04-17 08:01,2012-04-04 08:01,2012-04-17 08:01,,2012-04-04 08:01,2012-04-17 08:01,CS_MSO,PT_Normal,,,,,iE7UN2O9LUm3DWFUww23Lw,,,,N,0,0,,,2012-06-20 11:04,2012-06-20 11:04,admin,admin
1230,145953,5115,23011,794,1,0,N,N,N,CP_Drtn,TT_Task,DT_FixedDUR2,RV_OK,TK_NotStart,ENS46,Receiving Piping Supports IFC DWG's,,0,3078.983333,160,0,0,0,160,0,0,0,2012-02-28 08:01,,,2012-02-28 08:01,2012-03-19 08:01,,2012-02-28 08:01,2012-03-19 08:01,2012-02-28 08:01,2012-03-19 08:01,2012-02-28 08:01,2012-03-19 08:01,,2012-02-28 08:01,2012-03-19 08:01,CS_MSO,PT_Normal,,,,,DvYG9SfGW0uoU0Q6VN5YJw,,,,N,0,0,,,2012-06-20 11:04,2012-06-20 11:04,admin,admin
1231,145954,5115,23011,794,1,0,N,N,N,CP_Drtn,TT_Task,DT_FixedDUR2,RV_OK,TK_NotStart,ENS47,Receiving Cable tarys Support IFC DWG's,,0,3022.983333,104,0,0,0,104,0,0,0,2012-03-13 08:01,,,2012-03-13 08:01,2012-03-26 08:01,,2012-03-13 08:01,2012-03-26 08:01,2012-03-13 08:01,2012-03-26 08:01,2012-03-13 08:01,2012-03-26 08:01,,2012-03-13 08:01,2012-03-26 08:01,CS_MSO,PT_Normal,,,,,T9VCPV5LCUqWE61Fu7Imag,,,,N,0,0,,,2012-06-20 11:04,2012-06-20 11:04,admin,admin
1232,145955,5115,23011,794,1,0,N,N,N,CP_Drtn,TT_Task,DT_FixedDrtn,RV_OK,TK_NotStart,ENS49,"Receiving P/L 8"""" & 18"""" IFC DWG's",,0,2736,160,0,0,0,160,0,0,0,2012-04-10 16:00,,,2012-04-10 16:00,2012-04-30 16:00,,2012-04-10 16:00,2012-04-30 16:00,2012-04-10 16:00,2012-04-30 16:00,2012-04-10 16:00,2012-04-30 16:00,,2012-04-10 16:00,2012-04-30 16:00,CS_MSO,PT_Normal,,,,,QdSyWEzAAUaY22K0n6V8gQ,,,,N,0,0,,,2012-06-20 11:04,2012-06-20 11:04,admin,admin
1233,145956,5115,23012,794,1,0,N,N,N,CP_Drtn,TT_Task,DT_FixedDrtn,RV_OK,TK_NotStart,ENT43,Receiving Piping ISO`s IFC DWG's,,0,1047.983333,112,0,0,0,112,0,0,0,2012-02-27 08:01,,,2012-02-27 08:01,2012-03-12 08:01,,2012-02-27 08:01,2012-03-12 08:01,2012-02-27 08:01,2012-03-12 08:01,2012-02-27 08:01,2012-03-12 08:01,,2012-02-27 08:01,2012-03-12 08:01,CS_MSO,PT_Normal,,,,,63nvgVmzN0K239LuHi473w,,,,N,0,0,,,2012-06-20 11:04,2012-06-20 11:04,admin,admin
1234,145957,5115,23012,794,0,0,N,N,N,CP_Drtn,TT_FinMile,DT_FixedDrtn,RV_OK,TK_NotStart,ENT41,Issue Approved P&ID's / Equipment List IFC DWG's,,0,3584,0,0,0,0,0,0,0,0,2012-01-15 16:00,,,2012-01-15 16:00,2012-01-15 16:00,,2012-01-15 16:00,2012-01-15 16:00,2012-01-15 16:00,2012-01-15 16:00,2012-01-15 16:00,2012-01-15 16:00,,2012-01-15 16:00,2012-01-15 16:00,CS_MEO,PT_Normal,,,,,4OlBgsP+506Vj6aU/CqEjA,,,,N,0,0,,,2012-06-20 11:04,2012-06-20 11:04,admin,admin
1235,145958,5115,23012,794,0,0,N,N,N,CP_Drtn,TT_FinMile,DT_FixedDrtn,RV_OK,TK_NotStart,ENT42,Issue plat plans IFC DWG's,,0,3408,0,0,0,0,0,0,0,0,2012-02-06 16:00,,,2012-02-06 16:00,2012-02-06 16:00,,2012-02-06 16:00,2012-02-06 16:00,2012-02-06 16:00,2012-02-06 16:00,2012-02-06 16:00,2012-02-06 16:00,,2012-02-06 16:00,2012-02-06 16:00,CS_MEO,PT_Normal,,,,,I3fdEmsWukuXr4XoLHGgcQ,,,,N,0,0,,,2012-06-20 11:04,2012-06-20 11:04,admin,admin
1236,145959,5115,23012,5686,0,0,N,N,N,CP_Drtn,TT_FinMile,DT_FixedDrtn,RV_OK,TK_NotStart,ENT44,Issue Hydrotest maps & loops IFC DWG's,,0,2648,0,0,0,0,0,0,0,0,2012-02-28 16:00,,,2012-02-28 16:00,2012-02-28 16:00,,2012-02-28 16:00,2012-02-28 16:00,2012-02-28 16:00,2012-02-28 16:00,2012-02-28 16:00,2012-02-28 16:00,,2012-02-28 16:00,2012-02-28 16:00,CS_MEO,PT_Normal,,,,,sZVtKCRkYEaRazUG5JLvyw,,,,N,0,0,,,2012-06-20 11:04,2012-06-20 11:04,admin,admin
1237,145960,5115,23013,794,1,0,N,N,N,CP_Drtn,TT_Task,DT_FixedDUR2,RV_OK,TK_NotStart,ENE41,Receiving E&I IFC DWG`s,,0,2279.983333,776,0,0,0,776,0,0,0,2012-01-23 08:01,,,2012-01-23 08:01,2012-04-29 08:01,,2012-01-23 08:01,2012-04-29 08:01,2012-01-23 08:01,2012-04-29 08:01,2012-01-23 08:01,2012-04-29 08:01,,2012-01-23 08:01,2012-04-29 08:01,CS_MSO,PT_Normal,,,,,Tb/ThA8YpEikH5HSNmeJrg,,,,N,0,0,,,2012-06-20 11:04,2012-06-20 11:04,admin,admin
1238,145961,5115,22989,5686,1,0,N,N,N,CP_Drtn,TT_Task,DT_FixedDUR2,RV_OK,TK_NotStart,PF41,Pre-Fabrication of Steel Structure ( Jacket & Piles),,208,0,960,0,0,0,960,0,0,0,,,,2012-07-14 08:00,2012-12-10 16:00,,2012-06-13 08:00,2012-11-08 16:00,2012-06-13 08:00,2012-11-08 16:00,2012-06-13 08:00,2012-11-08 16:00,,2012-07-14 08:00,2012-12-10 16:00,,PT_Normal,,,,,1Gp8qwoDvUmIWkkGnP6ZhA,,,,N,0,0,,,2012-06-20 11:04,2012-06-20 11:04,admin,admin
1239,145962,5115,23005,794,1,0,N,N,N,CP_Drtn,TT_Task,DT_FixedDUR2,RV_OK,TK_NotStart,PRT81,Piping Bulk material 1st batch,,-0.016667,536,240,0,0,0,240,0,0,0,2012-05-07 17:00,,,2012-05-07 16:59,2012-06-06 16:59,,2012-05-08 08:00,2012-06-06 17:00,2012-05-08 08:00,2012-06-06 17:00,2012-05-08 08:00,2012-06-06 17:00,,2012-05-07 16:59,2012-06-06 16:59,CS_MSO,PT_Normal,,,,,fxLrI25u8E6i+BvUJyoRcQ,yl9WvSBhsUKXjamnJ9tBwA,,,N,0,0,,,2012-06-20 11:04,2012-06-20 11:04,admin,admin
1240,145963,5115,23005,794,1,0,N,N,N,CP_Drtn,TT_Task,DT_FixedDUR2,RV_OK,TK_NotStart,PRT82,Piping Bulk material 2nd batch,,-0.016667,855,240,0,0,0,240,0,0,0,2012-06-10 17:00,,,2012-06-10 16:59,2012-07-10 16:59,,2012-06-11 08:00,2012-07-10 17:00,2012-06-11 08:00,2012-07-10 17:00,2012-06-11 08:00,2012-07-10 17:00,,2012-06-10 16:59,2012-07-10 16:59,CS_MSO,PT_Normal,,,,,YNmDQkm/D0WhE7OVyySpjQ,hlpmj5RDM0ug86CkeyGt7w,,,N,0,0,,,2012-06-20 11:04,2012-06-20 11:04,admin,admin
1241,145964,5115,23005,794,1,0,N,N,N,CP_Drtn,TT_Task,DT_FixedDUR2,RV_OK,TK_NotStart,PRT43,Piping Valves Bulk material 1st batch,,-0.016667,999,112,0,0,0,112,0,0,0,2012-06-23 17:00,,,2012-06-23 16:59,2012-07-07 16:59,,2012-06-24 08:00,2012-07-07 17:00,2012-06-24 08:00,2012-07-07 17:00,2012-06-24 08:00,2012-07-07 17:00,,2012-06-23 16:59,2012-07-07 16:59,CS_MSO,PT_Normal,,,,,pmoBusQlCEiUwn09cd3NgA,GizpIK9AB0igoR6gZc1u/Q,,,N,0,0,,,2012-06-20 11:04,2012-06-20 11:04,admin,admin
1242,145965,5115,23005,794,1,0,N,N,N,CP_Drtn,TT_Task,DT_FixedDUR2,RV_OK,TK_NotStart,PRT44,Piping valves Bulk material 2nd batch,,-0.016667,767,112,0,0,0,112,0,0,0,2012-07-22 17:00,,,2012-07-22 16:59,2012-08-05 16:59,,2012-07-23 08:00,2012-08-05 17:00,2012-07-23 08:00,2012-08-05 17:00,2012-07-23 08:00,2012-08-05 17:00,,2012-07-22 16:59,2012-08-05 16:59,CS_MSO,PT_Normal,,,,,zQVqtpGk8UGS59eqeP2Jgg,UK1YuP2nDUesL7urCII2Dw,,,N,0,0,,,2012-06-20 11:04,2012-06-20 11:04,admin,admin
1243,145966,5115,23005,794,1,0,N,N,N,CP_Drtn,TT_Task,DT_FixedDUR2,RV_OK,TK_NotStart,PRT45,Flanges,,-0.016667,8,360,0,0,0,360,0,0,0,2012-07-13 17:00,,,2012-07-13 16:59,2012-08-27 16:59,,2012-07-14 08:00,2012-08-27 17:00,2012-07-14 08:00,2012-08-27 17:00,2012-07-14 08:00,2012-08-27 17:00,,2012-07-13 16:59,2012-08-27 16:59,CS_MSO,PT_Normal,,,,,7EDhbbXeN0CF35t5uZtpag,Ex31o9Pan0OuXqbrZEGEag,,,N,0,0,,,2012-06-20 11:04,2012-06-20 11:04,admin,admin
1244,145967,5115,23005,794,1,0,N,N,N,CP_Drtn,TT_Task,DT_FixedDUR2,RV_OK,TK_NotStart,PRT46,Pressure Safety Valve,,-0.016667,1519,352,0,0,0,352,0,0,0,2012-06-04 17:00,,,2012-06-04 16:59,2012-07-18 16:59,,2012-06-05 08:00,2012-07-18 17:00,2012-06-05 08:00,2012-07-18 17:00,2012-06-05 08:00,2012-07-18 17:00,,2012-06-04 16:59,2012-07-18 16:59,CS_MSO,PT_Normal,,,,,DaMke9oe5kO9/jgLsyMGEw,F7qZYQ2pcEuIGt99a45cYg,,,N,0,0,,,2012-06-20 11:04,2012-06-20 11:04,admin,admin
1245,145968,5115,23005,794,1,0,N,N,N,CP_Drtn,TT_Task,DT_FixedDUR2,RV_OK,TK_NotStart,PRT47,Pressure regulator Valve,,-0.016667,1231,240,0,0,0,240,0,0,0,2012-07-24 17:00,,,2012-07-24 16:59,2012-08-23 16:59,,2012-07-25 08:00,2012-08-23 17:00,2012-07-25 08:00,2012-08-23 17:00,2012-07-25 08:00,2012-08-23 17:00,,2012-07-24 16:59,2012-08-23 16:59,CS_MSO,PT_Normal,,,,,ckDpyTgoX0276x48KzvMyw,j+Gn0C3OAUWl0C1SspHgPw,,,N,0,0,,,2012-06-20 11:04,2012-06-20 11:04,admin,admin
1246,145969,5115,23005,794,1,0,N,N,N,CP_Drtn,TT_Task,DT_FixedDUR2,RV_OK,TK_NotStart,PRT48,Shutdown Valve,,-0.016667,1135,248,0,0,0,248,0,0,0,2012-08-04 17:00,,,2012-08-04 16:59,2012-09-04 16:59,,2012-08-05 08:00,2012-09-04 17:00,2012-08-05 08:00,2012-09-04 17:00,2012-08-05 08:00,2012-09-04 17:00,,2012-08-04 16:59,2012-09-04 16:59,CS_MSO,PT_Normal,,,,,i0f9yR+D1U+zhbocQesvOw,teAPEnX+OEanjGoc9mUlTg,,,N,0,0,,,2012-06-20 11:04,2012-06-20 11:04,admin,admin
1247,145970,5115,23002,794,1,0,N,N,N,CP_Drtn,TT_Task,DT_FixedDUR2,RV_OK,TK_NotStart,PRT49,Chemical Injection PKG.,,-0.016667,1264,360,0,0,0,360,0,0,0,2012-05-08 17:00,,,2012-05-08 16:59,2012-06-22 16:59,,2012-05-09 08:00,2012-06-22 17:00,2012-05-09 08:00,2012-06-22 17:00,2012-05-09 08:00,2012-06-22 17:00,,2012-05-08 16:59,2012-06-22 16:59,CS_MSO,PT_Normal,,,,,q2ogxdgFoUC4DDnbK5f0hg,yl9WvSBhsUKXjamnJ9tBwA,,,N,0,0,,,2012-06-20 11:04,2012-06-20 11:04,admin,admin
1248,145971,5115,23002,794,1,0,N,N,N,CP_Drtn,TT_Task,DT_FixedDUR2,RV_OK,TK_NotStart,PRT50,Launcher recivier,,-0.016667,960,360,0,0,0,360,0,0,0,2012-06-15 17:00,,,2012-06-15 16:59,2012-07-30 16:59,,2012-06-16 08:00,2012-07-30 17:00,2012-06-16 08:00,2012-07-30 17:00,2012-06-16 08:00,2012-07-30 17:00,,2012-06-15 16:59,2012-07-30 16:59,CS_MSO,PT_Normal,,,,,oGTjbRDmYEKBwiHxLMfKSg,hlpmj5RDM0ug86CkeyGt7w,,,N,0,0,,,2012-06-20 11:04,2012-06-20 11:04,admin,admin
1249,145972,5115,23002,794,1,0,N,N,N,CP_Drtn,TT_Task,DT_FixedDUR2,RV_OK,TK_NotStart,PRT91,Vent KOD,,-0.016667,864,360,0,0,0,360,0,0,0,2012-06-27 17:00,,,2012-06-27 16:59,2012-08-11 16:59,,2012-06-28 08:00,2012-08-11 17:00,2012-06-28 08:00,2012-08-11 17:00,2012-06-28 08:00,2012-08-11 17:00,,2012-06-27 16:59,2012-08-11 16:59,CS_MSO,PT_Normal,,,,,ajdRVzponkCkMJ/J50B1eQ,GizpIK9AB0igoR6gZc1u/Q,,,N,0,0,,,2012-06-20 11:04,2012-06-20 11:04,admin,admin
1250,145973,5115,23002,794,1,0,N,N,N,CP_Drtn,TT_Task,DT_FixedDUR2,RV_OK,TK_NotStart,PRT92,Open Drain Tank,,-0.016667,624,360,0,0,0,360,0,0,0,2012-06-27 17:00,,,2012-06-27 16:59,2012-08-11 16:59,,2012-06-28 08:00,2012-08-11 17:00,2012-06-28 08:00,2012-08-11 17:00,2012-06-28 08:00,2012-08-11 17:00,,2012-06-27 16:59,2012-08-11 16:59,CS_MSO,PT_Normal,,,,,duTvqgLoCk+HQP9xF2dVPw,UK1YuP2nDUesL7urCII2Dw,,,N,0,0,,,2012-06-20 11:04,2012-06-20 11:04,admin,admin
1251,145974,5115,23003,794,1,0,N,N,N,CP_Drtn,TT_Task,DT_FixedDUR2,RV_OK,TK_NotStart,PRS43,Delivery of Structure Material (F.O.B - 13 Wks.) - (Gupco Responsability),,0,0,728,0,0,0,728,0,0,0,,,,2012-02-15 08:00,2012-05-15 17:00,,2012-02-15 08:00,2012-05-15 17:00,2012-02-15 08:00,2012-05-15 17:00,2012-02-15 08:00,2012-05-15 17:00,,2012-02-15 08:00,2012-05-15 17:00,,PT_Normal,,,,,30SQyf1qokaqDOnxdl5UZQ,698/E0SRuUS4pAlggO6l9g,,,Y,0,0,,,2012-06-20 11:04,2012-06-20 11:04,admin,admin
1252,145975,5115,23003,794,1,0,N,N,N,CP_Drtn,TT_Task,DT_FixedDUR2,RV_OK,TK_NotStart,PRS45,Material check with IFC DWG's to Prepare balance material,,1566.983333,0,56,0,0,0,56,0,0,0,,,,2012-10-28 16:00,2012-11-04 16:00,,2012-04-16 08:01,2012-04-23 08:01,2012-04-16 08:01,2012-04-23 08:01,2012-04-16 08:01,2012-04-23 08:01,,2012-10-28 16:00,2012-11-04 16:00,,PT_Normal,,,,,TbuUE/xzcUqAMnGf4rGf3A,,,,N,0,0,,,2012-06-20 11:04,2012-06-20 11:04,admin,admin
1253,145976,5115,23003,794,1,0,N,N,N,CP_Drtn,TT_Task,DT_FixedDUR2,RV_OK,TK_NotStart,PRS46,Delivery of balance material,,1566.983333,1566.983333,1232,0,0,0,1232,0,0,0,,,,2012-11-04 16:00,2013-04-07 16:00,,2012-04-23 08:01,2012-09-24 08:01,2012-04-23 08:01,2012-09-24 08:01,2012-04-23 08:01,2012-09-24 08:01,,2012-11-04 16:00,2013-04-07 16:00,,PT_Normal,,,,,ZChfAN2PEEGW9ZItkmTt1A,,,,N,0,0,,,2012-06-20 11:04,2012-06-20 11:04,admin,admin
1254,145977,5115,23003,794,0,0,N,N,N,CP_Drtn,TT_Mile,DT_FixedDrtn,RV_OK,TK_NotStart,PRS41,Issue Structural Material P.O's ( Gupco Responsability),,0,64,0,0,0,0,0,0,0,0,2012-02-07 08:00,,,2012-02-07 08:00,2012-02-07 08:00,,2012-02-07 08:00,2012-02-07 08:00,2012-02-07 08:00,2012-02-07 08:00,2012-02-07 08:00,2012-02-07 08:00,,2012-02-07 08:00,2012-02-07 08:00,CS_MSO,PT_Normal,,,,,EG2r6L7nukq7MjI+HUJitw,,,,N,0,0,,,2012-06-20 11:04,2012-06-20 11:04,admin,admin
1255,145978,5115,23003,794,0,0,N,N,N,CP_Drtn,TT_Mile,DT_FixedDrtn,RV_OK,TK_NotStart,PRS42,Issue LC ( Gupco Responsability),,0,0,0,0,0,0,0,0,0,0,2012-02-15 08:00,,,2012-02-15 08:00,2012-02-15 08:00,,2012-02-15 08:00,2012-02-15 08:00,2012-02-15 08:00,2012-02-15 08:00,2012-02-15 08:00,2012-02-15 08:00,,2012-02-15 08:00,2012-02-15 08:00,CS_MSO,PT_Normal,,,,,qzGrq8DKYEKx6fePoXNlOg,,,,Y,0,0,,,2012-06-20 11:04,2012-06-20 11:04,admin,admin
1256,145979,5115,23003,794,1,0,N,N,N,CP_Drtn,TT_Task,DT_FixedDUR2,RV_OK,TK_NotStart,PRS44,Delivery of Structure Material at Site (4 Wks.),,0,0,224,0,0,0,224,0,0,0,,,,2012-05-16 08:00,2012-06-12 17:00,,2012-05-16 08:00,2012-06-12 17:00,2012-05-16 08:00,2012-06-12 17:00,2012-05-16 08:00,2012-06-12 17:00,,2012-05-16 08:00,2012-06-12 17:00,,PT_Normal,,,,,XJxSBuMmIki20XRL4I2FZQ,,,,Y,0,0,,,2012-06-20 11:04,2012-06-20 11:04,admin,admin
1257,145980,5115,23004,794,1,0,N,N,N,CP_Drtn,TT_Task,DT_FixedDrtn,RV_OK,TK_NotStart,PRP41,"Pipeline 18"""" & Fittings",,0,0,408,0,0,0,408,0,0,0,2012-05-31 08:00,,,2012-05-31 08:00,2012-07-20 17:00,,2012-05-31 08:00,2012-07-20 17:00,2012-05-31 08:00,2012-07-20 17:00,2012-05-31 08:00,2012-07-20 17:00,,2012-05-31 08:00,2012-07-20 17:00,CS_MSO,PT_Normal,,,,,7/VsdW9CyUi8UIUVMxa8Lw,,,,N,0,0,,,2012-06-20 11:04,2012-06-20 11:04,admin,admin
1258,145981,5115,23004,794,1,0,N,N,N,CP_Drtn,TT_Task,DT_FixedDrtn,RV_OK,TK_NotStart,PRP82,"Pipeline 8"""" & Fittings",,-0.016667,351,408,0,0,0,408,0,0,0,2012-05-30 17:00,,,2012-05-30 16:59,2012-07-20 16:59,,2012-05-31 08:00,2012-07-20 17:00,2012-05-31 08:00,2012-07-20 17:00,2012-05-31 08:00,2012-07-20 17:00,,2012-05-30 16:59,2012-07-20 16:59,CS_MSO,PT_Normal,,,,,6PSJymVj2kKXJd2seDpkxg,yl9WvSBhsUKXjamnJ9tBwA,,,N,0,0,,,2012-06-20 11:04,2012-06-20 11:04,admin,admin
1259,145982,5115,23027,794,1,0,N,N,N,CP_Drtn,TT_Task,DT_FixedDUR2,RV_OK,TK_NotStart,PRE47,Radar system,,-0.016667,904,240,0,0,0,240,0,0,0,2012-06-19 17:00,,,2012-06-19 16:59,2012-07-19 16:59,,2012-06-20 08:00,2012-07-19 17:00,2012-06-20 08:00,2012-07-19 17:00,2012-06-20 08:00,2012-07-19 17:00,,2012-06-19 16:59,2012-07-19 16:59,CS_MSO,PT_Normal,,,,,T8sxboH+HU+9pHjndPlO4Q,hR+VpIi9/EScdnqRSGSfwg,,,N,0,0,,,2012-06-20 11:04,2012-06-20 11:04,admin,admin
1260,145983,5115,23027,794,1,0,N,N,N,CP_Drtn,TT_Task,DT_FixedDUR2,RV_OK,TK_NotStart,PRE48,Navegation Aids,,-0.016667,1384,360,0,0,0,360,0,0,0,2012-04-05 17:00,,,2012-04-05 16:59,2012-05-20 16:59,,2012-04-06 08:00,2012-05-20 17:00,2012-04-06 08:00,2012-05-20 17:00,2012-04-06 08:00,2012-05-20 17:00,,2012-04-05 16:59,2012-05-20 16:59,CS_MSO,PT_Normal,,,,,D10x8UEN7EiWedHy0Xkh+Q,BsriHSUEkEGgiUy2IxXEwg,,,N,0,0,,,2012-06-20 11:04,2012-06-20 11:04,admin,admin
1261,145984,5115,23028,794,1,0,N,N,N,CP_Drtn,TT_Task,DT_FixedDUR2,RV_OK,TK_NotStart,PRE81,Electrical Bulks,,-0.016667,512,360,0,0,0,360,0,0,0,2012-07-23 17:00,,,2012-07-23 16:59,2012-09-06 16:59,,2012-07-24 08:00,2012-09-06 17:00,2012-07-24 08:00,2012-09-06 17:00,2012-07-24 08:00,2012-09-06 17:00,,2012-07-23 16:59,2012-09-06 16:59,CS_MSO,PT_Normal,,,,,W6KxHYLqRE2ia7fx1iwZXg,,,,N,0,0,,,2012-06-20 11:04,2012-06-20 11:04,admin,admin
1262,145985,5115,23028,794,1,0,N,N,N,CP_Drtn,TT_Task,DT_FixedDUR2,RV_OK,TK_NotStart,PRE82,Cathodic Protection,,-0.016667,1000,360,0,0,0,360,0,0,0,2012-05-23 17:00,,,2012-05-23 16:59,2012-07-07 16:59,,2012-05-24 08:00,2012-07-07 17:00,2012-05-24 08:00,2012-07-07 17:00,2012-05-24 08:00,2012-07-07 17:00,,2012-05-23 16:59,2012-07-07 16:59,CS_MSO,PT_Normal,,,,,scMil3rPX0yJecLgo5goUA,,,,N,0,0,,,2012-06-20 11:04,2012-06-20 11:04,admin,admin
1263,145986,5115,23028,794,1,0,N,N,N,CP_Drtn,TT_Task,DT_FixedDUR2,RV_OK,TK_NotStart,PRE83,Solar Power,,-0.016667,912,360,0,0,0,360,0,0,0,2012-06-03 17:00,,,2012-06-03 16:59,2012-07-18 16:59,,2012-06-04 08:00,2012-07-18 17:00,2012-06-04 08:00,2012-07-18 17:00,2012-06-04 08:00,2012-07-18 17:00,,2012-06-03 16:59,2012-07-18 16:59,CS_MSO,PT_Normal,,,,,K5Zr1FGqWEqzWZZWK/uBoA,,,,N,0,0,,,2012-06-20 11:04,2012-06-20 11:04,admin,admin
1264,145987,5115,23025,794,1,0,N,N,N,CP_Drtn,TT_Task,DT_FixedDUR2,RV_OK,TK_NotStart,PRE44,F&G Detector,,-0.016667,648,360,0,0,0,360,0,0,0,2012-07-06 17:00,,,2012-07-06 16:59,2012-08-20 16:59,,2012-07-07 08:00,2012-08-20 17:00,2012-07-07 08:00,2012-08-20 17:00,2012-07-07 08:00,2012-08-20 17:00,,2012-07-06 16:59,2012-08-20 16:59,CS_MSO,PT_Normal,,,,,uKK59vaC0kmajjCF/Mn3Ig,hR+VpIi9/EScdnqRSGSfwg,,,N,0,0,,,2012-06-20 11:04,2012-06-20 11:04,admin,admin
1265,145988,5115,23025,794,1,0,N,N,N,CP_Drtn,TT_Task,DT_FixedDUR2,RV_OK,TK_NotStart,PRE45,Fire fighting system,,-0.016667,720,360,0,0,0,360,0,0,0,2012-06-27 17:00,,,2012-06-27 16:59,2012-08-11 16:59,,2012-06-28 08:00,2012-08-11 17:00,2012-06-28 08:00,2012-08-11 17:00,2012-06-28 08:00,2012-08-11 17:00,,2012-06-27 16:59,2012-08-11 16:59,CS_MSO,PT_Normal,,,,,S/Vtxxxa1Umsu/dOZtnLNA,BsriHSUEkEGgiUy2IxXEwg,,,N,0,0,,,2012-06-20 11:04,2012-06-20 11:04,admin,admin
1266,145989,5115,23025,794,1,0,N,N,N,CP_Drtn,TT_Task,DT_FixedDUR2,RV_OK,TK_NotStart,PRE46,Life Saving Equipment,,-0.016667,664,360,0,0,0,360,0,0,0,2012-07-04 17:00,,,2012-07-04 16:59,2012-08-18 16:59,,2012-07-05 08:00,2012-08-18 17:00,2012-07-05 08:00,2012-08-18 17:00,2012-07-05 08:00,2012-08-18 17:00,,2012-07-04 16:59,2012-08-18 16:59,CS_MSO,PT_Normal,,,,,infRxkNrV0q+bY36GYM3KQ,BMPt6NUgQkm3eBH1L9b0qA,,,N,0,0,,,2012-06-20 11:04,2012-06-20 11:04,admin,admin
1267,145990,5115,23026,794,1,0,N,N,N,CP_Drtn,TT_Task,DT_FixedDUR2,RV_OK,TK_NotStart,PRE49,Instrument Electical Bulk,,-0.016667,624,240,0,0,0,240,0,0,0,2012-07-24 17:00,,,2012-07-24 16:59,2012-08-23 16:59,,2012-07-25 08:00,2012-08-23 17:00,2012-07-25 08:00,2012-08-23 17:00,2012-07-25 08:00,2012-08-23 17:00,,2012-07-24 16:59,2012-08-23 16:59,CS_MSO,PT_Normal,,,,,GaW85Ba7MkK5wCMYheYqrQ,hR+VpIi9/EScdnqRSGSfwg,,,N,0,0,,,2012-06-20 11:04,2012-06-20 11:04,admin,admin
1268,145991,5115,23026,794,1,0,N,N,N,CP_Drtn,TT_Task,DT_FixedDUR2,RV_OK,TK_NotStart,PRE50,Instrument Mechanical Bulk,,-0.016667,640,280,0,0,0,280,0,0,0,2012-07-17 17:00,,,2012-07-17 16:59,2012-08-21 16:59,,2012-07-18 08:00,2012-08-21 17:00,2012-07-18 08:00,2012-08-21 17:00,2012-07-18 08:00,2012-08-21 17:00,,2012-07-17 16:59,2012-08-21 16:59,CS_MSO,PT_Normal,,,,,6zzjEwUVyEq7jGmGsoi6nQ,BsriHSUEkEGgiUy2IxXEwg,,,N,0,0,,,2012-06-20 11:04,2012-06-20 11:04,admin,admin
1269,145992,5115,23026,794,1,0,N,N,N,CP_Drtn,TT_Task,DT_FixedDUR2,RV_OK,TK_NotStart,PRE91,Field Instrument,,-0.016667,760,360,0,0,0,360,0,0,0,2012-06-22 17:00,,,2012-06-22 16:59,2012-08-06 16:59,,2012-06-23 08:00,2012-08-06 17:00,2012-06-23 08:00,2012-08-06 17:00,2012-06-23 08:00,2012-08-06 17:00,,2012-06-22 16:59,2012-08-06 16:59,CS_MSO,PT_Normal,,,,,mgtF26aoa02ITn5T3XLVhw,BMPt6NUgQkm3eBH1L9b0qA,,,N,0,0,,,2012-06-20 11:04,2012-06-20 11:04,admin,admin
1270,145993,5115,23026,794,1,0,N,N,N,CP_Drtn,TT_Task,DT_FixedDUR2,RV_OK,TK_NotStart,PRE92,multi phase flow meter,,-0.016667,1095,456,0,0,0,456,0,0,0,2012-07-17 17:00,,,2012-07-17 16:59,2012-09-12 16:59,,2012-07-18 08:00,2012-09-12 17:00,2012-07-18 08:00,2012-09-12 17:00,2012-07-18 08:00,2012-09-12 17:00,,2012-07-17 16:59,2012-09-12 16:59,CS_MSO,PT_Normal,,,,,UVSPzQIC1UewDdYR70QERA,Mkb86m2/TUuHJY33o39Fuw,,,N,0,0,,,2012-06-20 11:04,2012-06-20 11:04,admin,admin
1271,145994,5115,23026,794,1,0,N,N,N,CP_Drtn,TT_Task,DT_FixedDUR2,RV_OK,TK_NotStart,PRE93,Safe Guard system,,-0.016667,1063,240,0,0,0,240,0,0,0,2012-08-17 17:00,,,2012-08-17 16:59,2012-09-16 16:59,,2012-08-18 08:00,2012-09-16 17:00,2012-08-18 08:00,2012-09-16 17:00,2012-08-18 08:00,2012-09-16 17:00,,2012-08-17 16:59,2012-09-16 16:59,CS_MSO,PT_Normal,,,,,hlb/U7edRkG4g2IcWgihbg,,,,N,0,0,,,2012-06-20 11:04,2012-06-20 11:04,admin,admin
1272,145995,5115,23018,5686,1,0,N,N,N,CP_Drtn,TT_Task,DT_FixedDUR2,RV_OK,TK_NotStart,JK41,"Jacket , Boat Landing Fabrication & Painting",,208,0,1400,0,0,0,1400,0,0,0,,,,2012-07-22 08:00,2013-02-24 16:00,,2012-06-21 08:00,2013-01-22 16:00,2012-06-21 08:00,2013-01-22 16:00,2012-06-21 08:00,2013-01-22 16:00,,2012-07-22 08:00,2013-02-24 16:00,,PT_Normal,,,,,76P/MRUZjUe3mnzGCZyxqQ,,,,N,0,0,,,2012-06-20 11:04,2012-06-20 11:04,admin,admin
1273,145996,5115,23018,5686,1,0,N,N,N,CP_Drtn,TT_Task,DT_FixedDUR2,RV_OK,TK_NotStart,JK42,Piles Fabrication & Marking,,592,592,1000,0,0,0,1000,0,0,0,,,,2012-11-08 08:00,2013-04-07 16:00,,2012-08-06 08:00,2013-01-08 16:00,2012-08-06 08:00,2013-01-08 16:00,2012-08-06 08:00,2013-01-08 16:00,,2012-11-08 08:00,2013-04-07 16:00,,PT_Normal,,,,,m+6nZpuZtkm/c4XYnJ5U2A,,,,N,0,0,,,2012-06-20 11:04,2012-06-20 11:04,admin,admin
1274,145997,5115,23029,5686,1,0,N,N,N,CP_Drtn,TT_Task,DT_FixedDUR2,RV_OK,TK_NotStart,DS051,Fabrication and Painting of Below Production Deck/Legs,,0,0,840,0,0,0,840,0,0,0,,,,2012-06-13 08:00,2012-10-18 16:00,,2012-06-13 08:00,2012-10-18 16:00,2012-06-13 08:00,2012-10-18 16:00,2012-06-13 08:00,2012-10-18 16:00,,2012-06-13 08:00,2012-10-18 16:00,,PT_Normal,,,,,elFEHA4otEuHn/W5dsbuEw,,,,Y,0,0,,,2012-06-20 11:04,2012-06-20 11:04,admin,admin
1275,145998,5115,23029,5686,1,0,N,N,N,CP_Drtn,TT_Task,DT_FixedDUR2,RV_OK,TK_NotStart,DS052,Fabrication and Painting of Production Deck,,0,0,960,0,0,0,960,0,0,0,,,,2012-06-13 08:00,2012-11-08 16:00,,2012-06-13 08:00,2012-11-08 16:00,2012-06-13 08:00,2012-11-08 16:00,2012-06-13 08:00,2012-11-08 16:00,,2012-06-13 08:00,2012-11-08 16:00,,PT_Normal,,,,,tdlLFoWyBEKZCA0deKnDOw,b7vZh9Ccpk+EXT4kXe5yzg,,,Y,0,0,,,2012-06-20 11:04,2012-06-20 11:04,admin,admin
1276,145999,5115,23029,5686,1,0,N,N,N,CP_Drtn,TT_Task,DT_FixedDUR2,RV_OK,TK_NotStart,DS053,Fabrication and Paint of Heli-Deck ( & Lifting if Required),,400,0,960,0,0,0,960,0,0,0,,,,2012-10-29 08:00,2013-03-21 16:00,,2012-08-27 08:00,2013-01-20 16:00,2012-08-27 08:00,2013-01-20 16:00,2012-08-27 08:00,2013-01-20 16:00,,2012-10-29 08:00,2013-03-21 16:00,,PT_Normal,,,,,pOrb4OMHNE2Xwm7clKd8Sw,JC1t+n1vH0eDZIP7mK52AA,,,N,0,0,,,2012-06-20 11:04,2012-06-20 11:04,admin,admin
1277,146000,5115,23029,5686,1,0,N,N,N,CP_Drtn,TT_Task,DT_FixedDUR2,RV_OK,TK_NotStart,DS054,Lifting Below Production Deck on High Cups,,24,0,40,0,0,0,40,0,0,0,,,,2012-10-23 08:00,2012-10-31 16:00,,2012-10-20 08:00,2012-10-24 16:00,2012-10-20 08:00,2012-10-24 16:00,2012-10-20 08:00,2012-10-24 16:00,,2012-10-23 08:00,2012-10-31 16:00,,PT_Normal,,,,,dUodEvA8nkmsw2hZ9XTcJA,,,,N,0,0,,,2012-06-20 11:04,2012-06-20 11:04,admin,admin
1278,146001,5115,23029,5686,1,0,N,N,N,CP_Drtn,TT_Task,DT_FixedDUR2,RV_OK,TK_NotStart,DS055,Lifting Production Deck on Below Production Level,,0,0,120,0,0,0,120,0,0,0,,,,2012-11-10 08:00,2012-11-27 16:00,,2012-11-10 08:00,2012-11-27 16:00,2012-11-10 08:00,2012-11-27 16:00,2012-11-10 08:00,2012-11-27 16:00,,2012-11-10 08:00,2012-11-27 16:00,,PT_Normal,,,,,KJDGorTEPUuUrEtMDhv9tg,,,,Y,0,0,,,2012-06-20 11:04,2012-06-20 11:04,admin,admin
1279,146002,5115,23029,5686,1,0,N,N,N,CP_Drtn,TT_Task,DT_FixedDUR2,RV_OK,TK_NotStart,DS056,Fabrication & Installation of Deck Str. Miscellence / Padeyes,,80,24,960,0,0,0,960,0,0,0,,,,2012-10-17 08:00,2013-03-13 16:00,,2012-10-04 08:00,2013-03-02 16:00,2012-10-04 08:00,2013-03-02 16:00,2012-10-04 08:00,2013-03-02 16:00,,2012-10-17 08:00,2013-03-13 16:00,,PT_Normal,,,,,Ujdp3kZ5bEaVSGssXwVHIA,,,,N,0,0,,,2012-06-20 11:04,2012-06-20 11:04,admin,admin
1280,146003,5115,23029,5686,0,0,N,N,N,CP_Drtn,TT_FinMile,DT_FixedDrtn,RV_OK,TK_NotStart,DS057,Physical Weighting,,80,0,0,0,0,0,0,0,0,0,,,,2013-03-06 16:00,2013-03-06 16:00,,2013-02-23 16:00,2013-02-23 16:00,2013-02-23 16:00,2013-02-23 16:00,2013-02-23 16:00,2013-02-23 16:00,,2013-03-06 16:00,2013-03-06 16:00,,PT_Normal,,,,,aBDaTBP19UmtQDXJGtVH+A,,,,N,0,0,,,2012-06-20 11:04,2012-06-20 11:04,admin,admin
1281,146004,5115,23029,5686,1,0,N,N,N,CP_Drtn,TT_Task,DT_FixedDUR2,RV_OK,TK_NotStart,DS048,Clearanse of structure (Fab. & Painting ) Punch List,,56,56,168,0,0,0,168,0,0,0,,,,2013-03-14 08:00,2013-04-07 16:00,,2013-03-06 08:00,2013-03-30 16:00,2013-03-06 08:00,2013-03-30 16:00,2013-03-06 08:00,2013-03-30 16:00,,2013-03-14 08:00,2013-04-07 16:00,,PT_Normal,,,,,ZeQl/TV2EECHLMsHsqjSlg,,,,N,0,0,,,2012-06-20 11:04,2012-06-20 11:04,admin,admin
1282,146005,5115,23031,5686,1,0,N,N,N,CP_Drtn,TT_Task,DT_FixedDUR2,RV_OK,TK_NotStart,TFS041,Piping and Piping Supports Fabrication and Painting,,320,320,800,0,0,0,800,0,0,0,,,,2012-09-10 08:00,2013-01-10 16:00,,2012-07-21 08:00,2012-11-24 16:00,2012-07-21 08:00,2012-11-24 16:00,2012-07-21 08:00,2012-11-24 16:00,,2012-09-10 08:00,2013-01-10 16:00,,PT_Normal,,,,,iTAnMrLUvUe4b1ZNvfQRZQ,,,,N,0,0,,,2012-06-20 11:04,2012-06-20 11:04,admin,admin
1283,146006,5115,23031,5686,1,0,N,N,N,CP_Drtn,TT_Task,DT_FixedDUR2,RV_OK,TK_NotStart,TSF042,Piping and Piping Supports Erection,,0,0,600,0,0,0,600,0,0,0,,,,2012-11-25 08:00,2013-02-23 16:00,,2012-11-25 08:00,2013-02-23 16:00,2012-11-25 08:00,2013-02-23 16:00,2012-11-25 08:00,2013-02-23 16:00,,2012-11-25 08:00,2013-02-23 16:00,,PT_Normal,,,,,sfPsEDyJQ0GIwDZVWHbRiA,,,,Y,0,0,,,2012-06-20 11:04,2012-06-20 11:04,admin,admin
1284,146007,5115,23032,5686,1,0,N,N,N,CP_Drtn,TT_Task,DT_FixedDUR2,RV_OK,TK_NotStart,TSF053,Equipment Erection on Below Production Level,,24,24,56,0,0,0,56,0,0,0,,,,2012-11-01 08:00,2012-11-08 16:00,,2012-10-29 08:00,2012-11-05 16:00,2012-10-29 08:00,2012-11-05 16:00,2012-10-29 08:00,2012-11-05 16:00,,2012-11-01 08:00,2012-11-08 16:00,,PT_Normal,,,,,LUObBG3y80Kp4gjv0401cQ,,,,N,0,0,,,2012-06-20 11:04,2012-06-20 11:04,admin,admin
1285,146008,5115,23032,5686,1,0,N,N,N,CP_Drtn,TT_Task,DT_FixedDUR2,RV_OK,TK_NotStart,TSF054,Equipment Erection on Production Level,,216,216,120,0,0,0,120,0,0,0,,,,2012-12-30 08:00,2013-01-16 16:00,,2012-11-28 08:00,2012-12-15 16:00,2012-11-28 08:00,2012-12-15 16:00,2012-11-28 08:00,2012-12-15 16:00,,2012-12-30 08:00,2013-01-16 16:00,,PT_Normal,,,,,DFl3/zU3o021SPLw9sGTAQ,,,,N,0,0,,,2012-06-20 11:04,2012-06-20 11:04,admin,admin
1286,146009,5115,23032,5686,1,0,N,N,N,CP_Drtn,TT_Task,DT_FixedDUR2,RV_OK,TK_NotStart,TSF055,Equipment Erection on Helideck,,400,400,56,0,0,0,56,0,0,0,,,,2013-02-16 08:00,2013-02-23 16:00,,2012-12-16 08:00,2012-12-23 16:00,2012-12-16 08:00,2012-12-23 16:00,2012-12-16 08:00,2012-12-23 16:00,,2013-02-16 08:00,2013-02-23 16:00,,PT_Normal,,,,,Cnbc5PeUmkaUR89swotZag,,,,N,0,0,,,2012-06-20 11:04,2012-06-20 11:04,admin,admin
1287,146010,5115,23033,5686,1,0,N,N,N,CP_Drtn,TT_Task,DT_FixedDUR2,RV_OK,TK_NotStart,TS47,E&I Activity,,16,16,720,0,0,0,720,0,0,0,,,,2012-11-12 08:00,2013-02-28 16:00,,2012-11-10 08:00,2013-02-26 16:00,2012-11-10 08:00,2013-02-26 16:00,2012-11-10 08:00,2013-02-26 16:00,,2012-11-12 08:00,2013-02-28 16:00,,PT_Normal,,,,,roM8hag3OUq5y8w3U5QTXw,,,,N,0,0,,,2012-06-20 11:04,2012-06-20 11:04,admin,admin
1288,146011,5115,23034,5686,1,0,N,N,N,CP_Drtn,TT_Task,DT_FixedDUR2,RV_OK,TK_NotStart,TS48,"Pre-commissioning """" Piping Hydrotest , Reinstatment , Megering , Continuity Test and Touch Up """"",,0,0,280,0,0,0,280,0,0,0,,,,2013-02-18 08:00,2013-03-30 16:00,,2013-02-18 08:00,2013-03-30 16:00,2013-02-18 08:00,2013-03-30 16:00,2013-02-18 08:00,2013-03-30 16:00,,2013-02-18 08:00,2013-03-30 16:00,,PT_Normal,,,,,zopvhDn1a0yXZdoPjPD6TQ,,,,Y,0,0,,,2012-06-20 11:04,2012-06-20 11:04,admin,admin
1289,146012,5115,23016,5686,1,0,N,N,N,CP_Drtn,TT_Task,DT_FixedDUR2,RV_OK,TK_NotStart,PL41,P/L Spools Fabrication,,832,0,720,0,0,0,720,0,0,0,,,,2012-11-07 08:00,2013-02-24 16:00,,2012-06-30 08:00,2012-10-17 16:00,2012-06-30 08:00,2012-10-17 16:00,2012-06-30 08:00,2012-10-17 16:00,,2012-11-07 08:00,2013-02-24 16:00,,PT_Normal,,,,,O3oBw0LovEiP5X4EoSwPXQ,,,,N,0,0,,,2012-06-20 11:04,2012-06-20 11:04,admin,admin
1290,146013,5115,23017,5686,0,0,N,N,N,CP_Drtn,TT_Mile,DT_FixedDrtn,RV_OK,TK_NotStart,LOPS81,Arrival of 01st Shipment Material Barge ( P/L Spools),,0,128,0,0,0,0,0,0,0,0,2012-09-15 08:00,,,2012-09-15 08:00,2012-09-15 08:00,,2012-09-15 08:00,2012-09-15 08:00,2012-09-15 08:00,2012-09-15 08:00,2012-09-15 08:00,2012-09-15 08:00,,2012-09-15 08:00,2012-09-15 08:00,CS_MSO,PT_Normal,,,,,CHX7il/HvkmNlKXO6GAkOg,,,,N,0,0,,,2012-06-20 11:04,2012-06-20 11:04,admin,admin
1291,146014,5115,23017,5686,1,0,N,N,N,CP_Drtn,TT_Task,DT_FixedDUR2,RV_OK,TK_NotStart,LOPS82,1st Shipment Material Barge Preparation,,1088,0,96,0,0,0,96,0,0,0,,,,2013-03-20 08:00,2013-04-02 16:00,,2012-10-03 08:00,2012-10-17 16:00,2012-10-03 08:00,2012-10-17 16:00,2012-10-03 08:00,2012-10-17 16:00,,2013-03-20 08:00,2013-04-02 16:00,,PT_Normal,,,,,u6zvTiXzO0iVelctED1veQ,,,,N,0,0,,,2012-06-20 11:04,2012-06-20 11:04,admin,admin
1292,146015,5115,23017,5686,1,0,N,N,N,CP_Drtn,TT_Task,DT_FixedDUR2,RV_OK,TK_NotStart,LOPS83,"L/O & Sea Fastening (P/L Spools 18"""" & 8"""")",,1088,0,32,0,0,0,32,0,0,0,,,,2013-04-03 08:00,2013-04-07 16:00,,2012-10-18 08:00,2012-10-22 16:00,2012-10-18 08:00,2012-10-22 16:00,2012-10-18 08:00,2012-10-22 16:00,,2013-04-03 08:00,2013-04-07 16:00,,PT_Normal,,,,,iHJteXFQXUaxJ8/7tPf1Zw,,,,N,0,0,,,2012-06-20 11:04,2012-06-20 11:04,admin,admin
1293,146016,5115,23020,5686,0,0,N,N,N,CP_Drtn,TT_Mile,DT_FixedDrtn,RV_OK,TK_NotStart,LOJK81,Arrival of 02nd Shipment Material Barge ( Jacket and Piles ),,0,263.983333,0,0,0,0,0,0,0,0,2012-12-01 08:01,,,2012-12-01 08:01,2012-12-01 08:01,,2012-12-01 08:01,2012-12-01 08:01,2012-12-01 08:01,2012-12-01 08:01,2012-12-01 08:01,2012-12-01 08:01,,2012-12-01 08:01,2012-12-01 08:01,CS_MSO,PT_Normal,,,,,7+iQhy2gdkuaH9KuTvzdRw,,,,N,0,0,,,2012-06-20 11:04,2012-06-20 11:04,admin,admin
1294,146017,5115,23020,5686,1,0,N,N,N,CP_Drtn,TT_Task,DT_FixedDUR2,RV_OK,TK_NotStart,LOJK82,02nd Shipment Material Barge Preparation,,208,0,96,0,0,0,96,0,0,0,,,,2013-02-11 08:00,2013-02-24 16:00,,2013-01-09 08:00,2013-01-22 16:00,2013-01-09 08:00,2013-01-22 16:00,2013-01-09 08:00,2013-01-22 16:00,,2013-02-11 08:00,2013-02-24 16:00,,PT_Normal,,,,,c77UKNJntk+O1+1wD+pvNg,,,,N,0,0,,,2012-06-20 11:04,2012-06-20 11:04,admin,admin
1295,146018,5115,23020,5686,1,0,N,N,N,CP_Drtn,TT_Task,DT_FixedDUR2,RV_OK,TK_NotStart,LOJK83,L/O & Sea fastening ( Jacket & Piles ),,208,0,56,0,0,0,56,0,0,0,,,,2013-02-25 08:00,2013-03-04 16:00,,2013-01-23 08:00,2013-01-31 16:00,2013-01-23 08:00,2013-01-31 16:00,2013-01-23 08:00,2013-01-31 16:00,,2013-02-25 08:00,2013-03-04 16:00,,PT_Normal,,,,,0GZlHwVi80y5z/5X3fFgkA,,,,N,0,0,,,2012-06-20 11:04,2012-06-20 11:04,admin,admin
1296,146019,5115,23015,5686,0,0,N,N,N,CP_Drtn,TT_Mile,DT_FixedDrtn,RV_OK,TK_NotStart,LODK81,Arrival of 03rd Shipment Material Barge ( Deck C/W TSF ),,-0.016667,104,0,0,0,0,0,0,0,0,2013-03-01 08:01,,,2013-02-28 15:59,2013-02-28 15:59,,2013-03-02 08:00,2013-03-02 08:00,2013-03-02 08:00,2013-03-02 08:00,2013-03-02 08:00,2013-03-02 08:00,,2013-02-28 15:59,2013-02-28 15:59,CS_MSO,PT_Normal,,,,,UaQQfHgyy0ObCpuOrMZXqw,,,,N,0,0,,,2012-06-20 11:04,2012-06-20 11:04,admin,admin
1297,146020,5115,23015,5686,1,0,N,N,N,CP_Drtn,TT_Task,DT_FixedDUR2,RV_OK,TK_NotStart,LODK82,3rd Shipment Material Barge Preparation,,0,0,96,0,0,0,96,0,0,0,,,,2013-03-17 08:00,2013-03-30 16:00,,2013-03-17 08:00,2013-03-30 16:00,2013-03-17 08:00,2013-03-30 16:00,2013-03-17 08:00,2013-03-30 16:00,,2013-03-17 08:00,2013-03-30 16:00,,PT_Normal,,,,,JsV3Gzuen0eLo1Kb5MhRng,Z6hgNBy73kGKLbXx2xhiTA,,,Y,0,0,,,2012-06-20 11:04,2012-06-20 11:04,admin,admin
1298,146021,5115,23015,5686,1,0,N,N,N,CP_Drtn,TT_Task,DT_FixedDUR2,RV_OK,TK_NotStart,LODK83,L/O & Sea fastening ( Deck),,0,0,56,0,0,0,56,0,0,0,,,,2013-03-31 08:00,2013-04-07 16:00,,2013-03-31 08:00,2013-04-07 16:00,2013-03-31 08:00,2013-04-07 16:00,2013-03-31 08:00,2013-04-07 16:00,,2013-03-31 08:00,2013-04-07 16:00,,PT_Normal,,,,,1r3jNWqY5UeH65QxwZagcA,,,,Y,0,0,,,2012-06-20 11:04,2012-06-20 11:04,admin,admin
1299,146022,5115,23004,794,1,0,N,N,N,CP_Drtn,TT_Task,DT_FixedDrtn,RV_OK,TK_NotStart,PRP92,"Pipeline 8"""" & Fittings",,-0.016667,2087,408,0,0,0,408,0,0,0,2012-05-30 17:00,,,2012-05-30 16:59,2012-07-20 16:59,,2012-05-31 08:00,2012-07-20 17:00,2012-05-31 08:00,2012-07-20 17:00,2012-05-31 08:00,2012-07-20 17:00,,2012-05-30 16:59,2012-07-20 16:59,CS_MSO,PT_Normal,,,,,/br9rWVL0UmFD2F/Gjb3xw,Z/LKROCTRSGDBSNh6tw23g,,,N,0,0,,,2012-06-20 11:04,2012-06-20 11:04,admin,admin
1300,146023,5115,22987,5686,0,0,N,N,N,CP_Drtn,TT_FinMile,DT_FixedDrtn,RV_OK,TK_NotStart,GM51,Reciving Fax of Award,,-0.016667,0,0,0,0,0,0,0,0,0,2012-01-20 16:00,,,2012-01-19 16:00,2012-01-19 16:00,,2012-01-21 08:01,2012-01-21 08:01,2012-01-21 08:01,2012-01-21 08:01,2012-01-21 08:01,2012-01-21 08:01,,2012-01-19 16:00,2012-01-19 16:00,CS_MEO,PT_Normal,,,,,XADmKF6Fl0OkyIjqTltMRw,mAYBql7WQzuUeAh5RGjavw,,,N,0,0,,,2012-06-20 11:04,2012-06-20 11:04,admin,admin
1301,146024,5115,22987,5686,0,0,N,N,N,CP_Drtn,TT_Mile,DT_FixedDrtn,RV_OK,TK_NotStart,GM52,Project Fab. Start,,1951.983333,1952,0,0,0,0,0,0,0,0,,,,2013-04-07 15:59,2013-04-07 15:59,,2012-06-13 08:00,2012-06-13 08:00,2012-06-13 08:00,2012-06-13 08:00,2012-06-13 08:00,2012-06-13 08:00,,2013-04-07 15:59,2013-04-07 15:59,,PT_Normal,,,,,qbNz67h36kGrUbW2k+DQ9A,MUGR7HsxSCatq1Lsy+yI2A,,,N,0,0,,,2012-06-20 11:04,2012-06-20 11:04,admin,admin
1302,146025,5115,22987,5686,0,0,N,N,N,CP_Drtn,TT_Mile,DT_FixedDrtn,RV_OK,TK_NotStart,GM54,Ready for Load out ( 02nd Shipment/ Jacket & Piles ),,208,208,0,0,0,0,0,0,0,0,,,,2013-02-25 08:00,2013-02-25 08:00,,2013-01-23 08:00,2013-01-23 08:00,2013-01-23 08:00,2013-01-23 08:00,2013-01-23 08:00,2013-01-23 08:00,,2013-02-25 08:00,2013-02-25 08:00,,PT_Normal,,,,,TAgaz/QcAEOAjBoTpvCNdQ,oEdGu9OnQ0CgAkVlSv8iuw,,,N,0,0,,,2012-06-20 11:04,2012-06-20 11:04,admin,admin
1303,146026,5115,22987,5686,0,0,N,N,N,CP_Drtn,TT_Mile,DT_FixedDrtn,RV_OK,TK_NotStart,GM55,Ready for Load out ( 03rd Shipment/ Deck C/W TSF ),,55.983333,56,0,0,0,0,0,0,0,0,,,,2013-04-07 15:59,2013-04-07 15:59,,2013-03-31 08:00,2013-03-31 08:00,2013-03-31 08:00,2013-03-31 08:00,2013-03-31 08:00,2013-03-31 08:00,,2013-04-07 15:59,2013-04-07 15:59,,PT_Normal,,,,,qZ4plezS1Ea29W/uM29jnQ,h7hpizZeQXG79P6YGic48A,,,N,0,0,,,2012-06-20 11:04,2012-06-20 11:04,admin,admin
1304,146027,5115,22987,5686,0,0,N,N,N,CP_Drtn,TT_Mile,DT_FixedDrtn,RV_OK,TK_NotStart,GM53,"Ready for Load out (01st Shipment / Pipeline Spools 18"""" & 8"""")",,1119.983333,1120,0,0,0,0,0,0,0,0,,,,2013-04-07 15:59,2013-04-07 15:59,,2012-10-18 08:00,2012-10-18 08:00,2012-10-18 08:00,2012-10-18 08:00,2012-10-18 08:00,2012-10-18 08:00,,2013-04-07 15:59,2013-04-07 15:59,,PT_Normal,,,,,giNnIKyGjE6QWakBV8DRug,hwMqvqcnTaWjHD3UCB8GZQ,,,N,0,0,,,2012-06-20 11:04,2012-06-20 11:04,admin,admin
1305,146028,5115,23011,794,1,0,N,N,N,CP_Drtn,TT_Task,DT_FixedDrtn,RV_OK,TK_NotStart,ENS53,Receiving Jacket Primary & Secondary Steel IFC DWG`s,,0,0,1104,0,0,0,1104,0,0,0,2011-11-30 08:01,,,2011-11-30 08:01,2012-04-16 08:01,,2011-11-30 08:01,2012-04-16 08:01,2011-11-30 08:01,2012-04-16 08:01,2011-11-30 08:01,2012-04-16 08:01,,2011-11-30 08:01,2012-04-16 08:01,CS_MSO,PT_Normal,,,,,CKJAYsfeXUi2JMPz8j6kdg,/taVGz7GStKxIdbmdm3JkA,,,N,0,0,,,2012-06-20 11:04,2012-06-20 11:04,admin,admin
1306,146029,5115,23011,794,0,0,N,N,N,CP_Drtn,TT_FinMile,DT_FixedDrtn,RV_OK,TK_NotStart,ENS54,Receiving Piles IFC DWG`s,,0,720,0,0,0,0,0,0,0,0,2012-01-17 08:01,,,2012-01-17 08:01,2012-01-17 08:01,,2012-01-17 08:01,2012-01-17 08:01,2012-01-17 08:01,2012-01-17 08:01,2012-01-17 08:01,2012-01-17 08:01,,2012-01-17 08:01,2012-01-17 08:01,CS_MEO,PT_Normal,,,,,WKC/J2WPAkO3vn/H4X4jlg,Na3Aup6tShC+yRgy8OADFw,,,N,0,0,,,2012-06-20 11:04,2012-06-20 11:04,admin,admin
1307,146030,5115,23011,794,1,0,N,N,N,CP_Drtn,TT_Task,DT_FixedDUR2,RV_OK,TK_NotStart,ENS55,Receiving Deck Str. Primary & Secondary IFC DWG`s,,0,224,328,0,0,0,328,0,0,0,2012-02-07 08:01,,,2012-02-07 08:01,2012-03-19 08:01,,2012-02-07 08:01,2012-03-19 08:01,2012-02-07 08:01,2012-03-19 08:01,2012-02-07 08:01,2012-03-19 08:01,,2012-02-07 08:01,2012-03-19 08:01,CS_MSO,PT_Normal,,,,,sYZYmfstm0KJXOPd9PRPsg,fi7weAl5SEGTR2lLUeKx/w,,,N,0,0,,,2012-06-20 11:04,2012-06-20 11:04,admin,admin
1308,146031,5115,23011,794,0,0,N,N,N,CP_Drtn,TT_FinMile,DT_FixedDrtn,RV_OK,TK_NotStart,ENS51,"Receiving Final Jacket , Boat Land & Piles MTO",,135.983333,135.983333,0,0,0,0,0,0,0,0,,,,2012-02-14 17:00,2012-02-14 17:00,,2012-01-29 08:01,2012-01-29 08:01,2012-01-29 08:01,2012-01-29 08:01,2012-01-29 08:01,2012-01-29 08:01,,2012-02-14 17:00,2012-02-14 17:00,,PT_Normal,,,,,2XZwKcSu1kizc1qTb2WZGQ,TPEjRmwKRrq6hsy6oKat/g,,,N,0,0,,,2012-06-20 11:04,2012-06-20 11:04,admin,admin
1309,146032,5115,23011,794,0,0,N,N,N,CP_Drtn,TT_FinMile,DT_FixedDrtn,RV_OK,TK_NotStart,ENS52,Receiving Final Deck Str. MTO,,135.983333,135.983333,0,0,0,0,0,0,0,0,,,,2012-02-14 17:00,2012-02-14 17:00,,2012-01-29 08:01,2012-01-29 08:01,2012-01-29 08:01,2012-01-29 08:01,2012-01-29 08:01,2012-01-29 08:01,,2012-02-14 17:00,2012-02-14 17:00,,PT_Normal,,,,,m32hgc4vQESiVIn4b4GyjA,6nkSfB2oQqWjhNUPP6KgpA,,,N,0,0,,,2012-06-20 11:04,2012-06-20 11:04,admin,admin
1310,146033,5115,23011,794,1,0,N,N,N,CP_Drtn,TT_Task,DT_FixedDrtn,RV_OK,TK_NotStart,ENS58,Receiving IFC Equipment fixation DWG`s,,0,1559.983333,104,0,0,0,104,0,0,0,2012-04-04 08:01,,,2012-04-04 08:01,2012-04-17 08:01,,2012-04-04 08:01,2012-04-17 08:01,2012-04-04 08:01,2012-04-17 08:01,2012-04-04 08:01,2012-04-17 08:01,,2012-04-04 08:01,2012-04-17 08:01,CS_MSO,PT_Normal,,,,,EpmzVVj6XkeQFn3ljGfJ7Q,mm1mBipHSJKSJiX6ECgsuA,,,N,0,0,,,2012-06-20 11:04,2012-06-20 11:04,admin,admin
1311,146034,5115,23011,794,1,0,N,N,N,CP_Drtn,TT_Task,DT_FixedDUR2,RV_OK,TK_NotStart,ENS56,Receiving Piping Supports IFC DWG's,,0,3078.983333,160,0,0,0,160,0,0,0,2012-02-28 08:01,,,2012-02-28 08:01,2012-03-19 08:01,,2012-02-28 08:01,2012-03-19 08:01,2012-02-28 08:01,2012-03-19 08:01,2012-02-28 08:01,2012-03-19 08:01,,2012-02-28 08:01,2012-03-19 08:01,CS_MSO,PT_Normal,,,,,3I83sosUmkSz6Baq7XJehA,00Owhd0XR8uvJLKhPzMELA,,,N,0,0,,,2012-06-20 11:04,2012-06-20 11:04,admin,admin
1312,146035,5115,23011,794,1,0,N,N,N,CP_Drtn,TT_Task,DT_FixedDUR2,RV_OK,TK_NotStart,ENS57,Receiving Cable tarys Support IFC DWG's,,0,3022.983333,104,0,0,0,104,0,0,0,2012-03-13 08:01,,,2012-03-13 08:01,2012-03-26 08:01,,2012-03-13 08:01,2012-03-26 08:01,2012-03-13 08:01,2012-03-26 08:01,2012-03-13 08:01,2012-03-26 08:01,,2012-03-13 08:01,2012-03-26 08:01,CS_MSO,PT_Normal,,,,,8/h+wyrzNk2n37aC11jTng,JPgGdggzREiAYSQ7vnqU2w,,,N,0,0,,,2012-06-20 11:04,2012-06-20 11:04,admin,admin
1313,146036,5115,23011,794,1,0,N,N,N,CP_Drtn,TT_Task,DT_FixedDrtn,RV_OK,TK_NotStart,ENS59,"Receiving P/L 8"""" & 18"""" IFC DWG's",,0,2736,160,0,0,0,160,0,0,0,2012-04-10 16:00,,,2012-04-10 16:00,2012-04-30 16:00,,2012-04-10 16:00,2012-04-30 16:00,2012-04-10 16:00,2012-04-30 16:00,2012-04-10 16:00,2012-04-30 16:00,,2012-04-10 16:00,2012-04-30 16:00,CS_MSO,PT_Normal,,,,,vUdFnRXpNUehopFMx1cN3g,98Xxuu9fQZixtpBjPwMmlQ,,,N,0,0,,,2012-06-20 11:04,2012-06-20 11:04,admin,admin
1314,146037,5115,23012,794,1,0,N,N,N,CP_Drtn,TT_Task,DT_FixedDrtn,RV_OK,TK_NotStart,ENT53,Receiving Piping ISO`s IFC DWG's,,0,1047.983333,112,0,0,0,112,0,0,0,2012-02-27 08:01,,,2012-02-27 08:01,2012-03-12 08:01,,2012-02-27 08:01,2012-03-12 08:01,2012-02-27 08:01,2012-03-12 08:01,2012-02-27 08:01,2012-03-12 08:01,,2012-02-27 08:01,2012-03-12 08:01,CS_MSO,PT_Normal,,,,,D5qzoPHKe0ymcxPkXScdoQ,enOOp99+SsqEvqB5hnSgoA,,,N,0,0,,,2012-06-20 11:04,2012-06-20 11:04,admin,admin
1315,146038,5115,23012,794,0,0,N,N,N,CP_Drtn,TT_FinMile,DT_FixedDrtn,RV_OK,TK_NotStart,ENT51,Issue Approved P&ID's / Equipment List IFC DWG's,,0,3584,0,0,0,0,0,0,0,0,2012-01-15 16:00,,,2012-01-15 16:00,2012-01-15 16:00,,2012-01-15 16:00,2012-01-15 16:00,2012-01-15 16:00,2012-01-15 16:00,2012-01-15 16:00,2012-01-15 16:00,,2012-01-15 16:00,2012-01-15 16:00,CS_MEO,PT_Normal,,,,,nIrFyKrJYkSi8B+eFSA3nw,93sGNlW6QoCv/1ksHG2NzA,,,N,0,0,,,2012-06-20 11:04,2012-06-20 11:04,admin,admin
1316,146039,5115,23012,794,0,0,N,N,N,CP_Drtn,TT_FinMile,DT_FixedDrtn,RV_OK,TK_NotStart,ENT52,Issue plat plans IFC DWG's,,0,3408,0,0,0,0,0,0,0,0,2012-02-06 16:00,,,2012-02-06 16:00,2012-02-06 16:00,,2012-02-06 16:00,2012-02-06 16:00,2012-02-06 16:00,2012-02-06 16:00,2012-02-06 16:00,2012-02-06 16:00,,2012-02-06 16:00,2012-02-06 16:00,CS_MEO,PT_Normal,,,,,l5VV3FJ8OUSRr/cs5UIzkQ,FmX28kBFQpGSXexVmL7Wlw,,,N,0,0,,,2012-06-20 11:04,2012-06-20 11:04,admin,admin
1317,146040,5115,23012,5686,0,0,N,N,N,CP_Drtn,TT_FinMile,DT_FixedDrtn,RV_OK,TK_NotStart,ENT54,Issue Hydrotest maps & loops IFC DWG's,,0,2648,0,0,0,0,0,0,0,0,2012-02-28 16:00,,,2012-02-28 16:00,2012-02-28 16:00,,2012-02-28 16:00,2012-02-28 16:00,2012-02-28 16:00,2012-02-28 16:00,2012-02-28 16:00,2012-02-28 16:00,,2012-02-28 16:00,2012-02-28 16:00,CS_MEO,PT_Normal,,,,,UYKljWfa3kiXd2bzYGxspw,5DGNq1VSTqKaHuj3eSEIjw,,,N,0,0,,,2012-06-20 11:04,2012-06-20 11:04,admin,admin
1318,146041,5115,23013,794,1,0,N,N,N,CP_Drtn,TT_Task,DT_FixedDUR2,RV_OK,TK_NotStart,ENE51,Receiving E&I IFC DWG`s,,0,2279.983333,776,0,0,0,776,0,0,0,2012-01-23 08:01,,,2012-01-23 08:01,2012-04-29 08:01,,2012-01-23 08:01,2012-04-29 08:01,2012-01-23 08:01,2012-04-29 08:01,2012-01-23 08:01,2012-04-29 08:01,,2012-01-23 08:01,2012-04-29 08:01,CS_MSO,PT_Normal,,,,,4L29bpIXY0esZyz8onrzoQ,3Z6l8wXrS6642p/eM8yB1A,,,N,0,0,,,2012-06-20 11:04,2012-06-20 11:04,admin,admin
1319,146042,5115,22989,5686,1,0,N,N,N,CP_Drtn,TT_Task,DT_FixedDUR2,RV_OK,TK_NotStart,PF51,Pre-Fabrication of Steel Structure ( Jacket & Piles),,208,0,960,0,0,0,960,0,0,0,,,,2012-07-14 08:00,2012-12-10 16:00,,2012-06-13 08:00,2012-11-08 16:00,2012-06-13 08:00,2012-11-08 16:00,2012-06-13 08:00,2012-11-08 16:00,,2012-07-14 08:00,2012-12-10 16:00,,PT_Normal,,,,,r9FEegp9ikex/Rw+meg8mw,BUUxQXUKQcKvFYRqrGtbRg,,,N,0,0,,,2012-06-20 11:04,2012-06-20 11:04,admin,admin
1320,146043,5115,23005,794,1,0,N,N,N,CP_Drtn,TT_Task,DT_FixedDUR2,RV_OK,TK_NotStart,PRT101,Piping Bulk material 1st batch,,-0.016667,536,240,0,0,0,240,0,0,0,2012-05-07 17:00,,,2012-05-07 16:59,2012-06-06 16:59,,2012-05-08 08:00,2012-06-06 17:00,2012-05-08 08:00,2012-06-06 17:00,2012-05-08 08:00,2012-06-06 17:00,,2012-05-07 16:59,2012-06-06 16:59,CS_MSO,PT_Normal,,,,,pZlWVlsbG06KRbfjgcbMWw,DqLN36xRQY+kZsfpyGsU9w,,,N,0,0,,,2012-06-20 11:04,2012-06-20 11:04,admin,admin
1321,146044,5115,23005,794,1,0,N,N,N,CP_Drtn,TT_Task,DT_FixedDUR2,RV_OK,TK_NotStart,PRT102,Piping Bulk material 2nd batch,,-0.016667,855,240,0,0,0,240,0,0,0,2012-06-10 17:00,,,2012-06-10 16:59,2012-07-10 16:59,,2012-06-11 08:00,2012-07-10 17:00,2012-06-11 08:00,2012-07-10 17:00,2012-06-11 08:00,2012-07-10 17:00,,2012-06-10 16:59,2012-07-10 16:59,CS_MSO,PT_Normal,,,,,YAavgRCqOUG3Bx0v9mBm4A,fRmh57i3SamJM0o1p2/3vA,,,N,0,0,,,2012-06-20 11:04,2012-06-20 11:04,admin,admin
1322,146045,5115,23005,794,1,0,N,N,N,CP_Drtn,TT_Task,DT_FixedDUR2,RV_OK,TK_NotStart,PRT53,Piping Valves Bulk material 1st batch,,-0.016667,999,112,0,0,0,112,0,0,0,2012-06-23 17:00,,,2012-06-23 16:59,2012-07-07 16:59,,2012-06-24 08:00,2012-07-07 17:00,2012-06-24 08:00,2012-07-07 17:00,2012-06-24 08:00,2012-07-07 17:00,,2012-06-23 16:59,2012-07-07 16:59,CS_MSO,PT_Normal,,,,,ExehUWNqI0mfFSz0wcCZ/Q,7wg9/w/MQ7a7zI20+pTM+A,,,N,0,0,,,2012-06-20 11:04,2012-06-20 11:04,admin,admin
1323,146046,5115,23005,794,1,0,N,N,N,CP_Drtn,TT_Task,DT_FixedDUR2,RV_OK,TK_NotStart,PRT54,Piping valves Bulk material 2nd batch,,-0.016667,767,112,0,0,0,112,0,0,0,2012-07-22 17:00,,,2012-07-22 16:59,2012-08-05 16:59,,2012-07-23 08:00,2012-08-05 17:00,2012-07-23 08:00,2012-08-05 17:00,2012-07-23 08:00,2012-08-05 17:00,,2012-07-22 16:59,2012-08-05 16:59,CS_MSO,PT_Normal,,,,,5tABwzWQOUGIstc68sKQZw,iGFfO+XNTpqt+16+eOx2EA,,,N,0,0,,,2012-06-20 11:04,2012-06-20 11:04,admin,admin
1324,146047,5115,23005,794,1,0,N,N,N,CP_Drtn,TT_Task,DT_FixedDUR2,RV_OK,TK_NotStart,PRT55,Flanges,,-0.016667,8,360,0,0,0,360,0,0,0,2012-07-13 17:00,,,2012-07-13 16:59,2012-08-27 16:59,,2012-07-14 08:00,2012-08-27 17:00,2012-07-14 08:00,2012-08-27 17:00,2012-07-14 08:00,2012-08-27 17:00,,2012-07-13 16:59,2012-08-27 16:59,CS_MSO,PT_Normal,,,,,MxDK67w9H0m9tuxRsgfxew,VAq1SSMERrmj1gqIqoQiTg,,,N,0,0,,,2012-06-20 11:04,2012-06-20 11:04,admin,admin
1325,146048,5115,23005,794,1,0,N,N,N,CP_Drtn,TT_Task,DT_FixedDUR2,RV_OK,TK_NotStart,PRT56,Pressure Safety Valve,,-0.016667,1519,352,0,0,0,352,0,0,0,2012-06-04 17:00,,,2012-06-04 16:59,2012-07-18 16:59,,2012-06-05 08:00,2012-07-18 17:00,2012-06-05 08:00,2012-07-18 17:00,2012-06-05 08:00,2012-07-18 17:00,,2012-06-04 16:59,2012-07-18 16:59,CS_MSO,PT_Normal,,,,,NlOQAUmcnk+xgyCeXvXMTw,+SvOOjbVT6SM2f4LWOHEpg,,,N,0,0,,,2012-06-20 11:04,2012-06-20 11:04,admin,admin
1326,146049,5115,23005,794,1,0,N,N,N,CP_Drtn,TT_Task,DT_FixedDUR2,RV_OK,TK_NotStart,PRT57,Pressure regulator Valve,,-0.016667,1231,240,0,0,0,240,0,0,0,2012-07-24 17:00,,,2012-07-24 16:59,2012-08-23 16:59,,2012-07-25 08:00,2012-08-23 17:00,2012-07-25 08:00,2012-08-23 17:00,2012-07-25 08:00,2012-08-23 17:00,,2012-07-24 16:59,2012-08-23 16:59,CS_MSO,PT_Normal,,,,,WwbbfDHugEy/w90EfCWNZQ,FkVucARhQlCiyikicegBhQ,,,N,0,0,,,2012-06-20 11:04,2012-06-20 11:04,admin,admin
1327,146050,5115,23005,794,1,0,N,N,N,CP_Drtn,TT_Task,DT_FixedDUR2,RV_OK,TK_NotStart,PRT58,Shutdown Valve,,-0.016667,1135,248,0,0,0,248,0,0,0,2012-08-04 17:00,,,2012-08-04 16:59,2012-09-04 16:59,,2012-08-05 08:00,2012-09-04 17:00,2012-08-05 08:00,2012-09-04 17:00,2012-08-05 08:00,2012-09-04 17:00,,2012-08-04 16:59,2012-09-04 16:59,CS_MSO,PT_Normal,,,,,vbKOB8dRnE6WjgJWeL7TWQ,GViNUzKNR0i8XYjXx02J5Q,,,N,0,0,,,2012-06-20 11:04,2012-06-20 11:04,admin,admin
1328,146051,5115,23002,794,1,0,N,N,N,CP_Drtn,TT_Task,DT_FixedDUR2,RV_OK,TK_NotStart,PRT59,Chemical Injection PKG.,,-0.016667,1264,360,0,0,0,360,0,0,0,2012-05-08 17:00,,,2012-05-08 16:59,2012-06-22 16:59,,2012-05-09 08:00,2012-06-22 17:00,2012-05-09 08:00,2012-06-22 17:00,2012-05-09 08:00,2012-06-22 17:00,,2012-05-08 16:59,2012-06-22 16:59,CS_MSO,PT_Normal,,,,,2A1vPaMn/kiIFcWOj9gjqg,eKvs6VRWSyOb6HNtkF9+AA,,,N,0,0,,,2012-06-20 11:04,2012-06-20 11:04,admin,admin
1329,146052,5115,23002,794,1,0,N,N,N,CP_Drtn,TT_Task,DT_FixedDUR2,RV_OK,TK_NotStart,PRT60,Launcher recivier,,-0.016667,960,360,0,0,0,360,0,0,0,2012-06-15 17:00,,,2012-06-15 16:59,2012-07-30 16:59,,2012-06-16 08:00,2012-07-30 17:00,2012-06-16 08:00,2012-07-30 17:00,2012-06-16 08:00,2012-07-30 17:00,,2012-06-15 16:59,2012-07-30 16:59,CS_MSO,PT_Normal,,,,,FbTL2WPzXUKY7DdVL3eQfA,3IwzhhfhR3KgxUsvdJ6rqQ,,,N,0,0,,,2012-06-20 11:04,2012-06-20 11:04,admin,admin
1330,146053,5115,23002,794,1,0,N,N,N,CP_Drtn,TT_Task,DT_FixedDUR2,RV_OK,TK_NotStart,PRT111,Vent KOD,,-0.016667,864,360,0,0,0,360,0,0,0,2012-06-27 17:00,,,2012-06-27 16:59,2012-08-11 16:59,,2012-06-28 08:00,2012-08-11 17:00,2012-06-28 08:00,2012-08-11 17:00,2012-06-28 08:00,2012-08-11 17:00,,2012-06-27 16:59,2012-08-11 16:59,CS_MSO,PT_Normal,,,,,WOS02t3IwEeR0HmPVGSD0w,V+De5pWvTHyHzJo6bSHRww,,,N,0,0,,,2012-06-20 11:04,2012-06-20 11:04,admin,admin
1331,146054,5115,23002,794,1,0,N,N,N,CP_Drtn,TT_Task,DT_FixedDUR2,RV_OK,TK_NotStart,PRT112,Open Drain Tank,,-0.016667,624,360,0,0,0,360,0,0,0,2012-06-27 17:00,,,2012-06-27 16:59,2012-08-11 16:59,,2012-06-28 08:00,2012-08-11 17:00,2012-06-28 08:00,2012-08-11 17:00,2012-06-28 08:00,2012-08-11 17:00,,2012-06-27 16:59,2012-08-11 16:59,CS_MSO,PT_Normal,,,,,ONrB2jBx6EuC4ueL9FK0Fw,Dvo6DiXYTvSm95/lOoAUnw,,,N,0,0,,,2012-06-20 11:04,2012-06-20 11:04,admin,admin
1332,146055,5115,23003,794,1,0,N,N,N,CP_Drtn,TT_Task,DT_FixedDUR2,RV_OK,TK_NotStart,PRS53,Delivery of Structure Material (F.O.B - 13 Wks.) - (Gupco Responsability),,0,0,728,0,0,0,728,0,0,0,,,,2012-02-15 08:00,2012-05-15 17:00,,2012-02-15 08:00,2012-05-15 17:00,2012-02-15 08:00,2012-05-15 17:00,2012-02-15 08:00,2012-05-15 17:00,,2012-02-15 08:00,2012-05-15 17:00,,PT_Normal,,,,,V0rAq62AS0WHofeiHTTdKg,dmjGd5dtRyGQN7eIgjvWtA,,,Y,0,0,,,2012-06-20 11:04,2012-06-20 11:04,admin,admin
1333,146056,5115,23003,794,1,0,N,N,N,CP_Drtn,TT_Task,DT_FixedDUR2,RV_OK,TK_NotStart,PRS55,Material check with IFC DWG's to Prepare balance material,,1566.983333,0,56,0,0,0,56,0,0,0,,,,2012-10-28 16:00,2012-11-04 16:00,,2012-04-16 08:01,2012-04-23 08:01,2012-04-16 08:01,2012-04-23 08:01,2012-04-16 08:01,2012-04-23 08:01,,2012-10-28 16:00,2012-11-04 16:00,,PT_Normal,,,,,OCCsqCSmS0K7zN2ZET5yvQ,TiJCnNvxQjGqD/lEVDLgtw,,,N,0,0,,,2012-06-20 11:04,2012-06-20 11:04,admin,admin
1334,146057,5115,23003,794,1,0,N,N,N,CP_Drtn,TT_Task,DT_FixedDUR2,RV_OK,TK_NotStart,PRS56,Delivery of balance material,,1566.983333,1566.983333,1232,0,0,0,1232,0,0,0,,,,2012-11-04 16:00,2013-04-07 16:00,,2012-04-23 08:01,2012-09-24 08:01,2012-04-23 08:01,2012-09-24 08:01,2012-04-23 08:01,2012-09-24 08:01,,2012-11-04 16:00,2013-04-07 16:00,,PT_Normal,,,,,tAdLqIvrZEmBwB+/YhFQCg,oU6FnPOSQS+kCV/HY5y5yA,,,N,0,0,,,2012-06-20 11:04,2012-06-20 11:04,admin,admin
1335,146058,5115,23003,794,0,0,N,N,N,CP_Drtn,TT_Mile,DT_FixedDrtn,RV_OK,TK_NotStart,PRS51,Issue Structural Material P.O's ( Gupco Responsability),,0,64,0,0,0,0,0,0,0,0,2012-02-07 08:00,,,2012-02-07 08:00,2012-02-07 08:00,,2012-02-07 08:00,2012-02-07 08:00,2012-02-07 08:00,2012-02-07 08:00,2012-02-07 08:00,2012-02-07 08:00,,2012-02-07 08:00,2012-02-07 08:00,CS_MSO,PT_Normal,,,,,bLGC7IhtOU+5nns4myxwIA,xF9X1iufT72bd1+OFKWOyQ,,,N,0,0,,,2012-06-20 11:04,2012-06-20 11:04,admin,admin
1336,146059,5115,23003,794,0,0,N,N,N,CP_Drtn,TT_Mile,DT_FixedDrtn,RV_OK,TK_NotStart,PRS52,Issue LC ( Gupco Responsability),,0,0,0,0,0,0,0,0,0,0,2012-02-15 08:00,,,2012-02-15 08:00,2012-02-15 08:00,,2012-02-15 08:00,2012-02-15 08:00,2012-02-15 08:00,2012-02-15 08:00,2012-02-15 08:00,2012-02-15 08:00,,2012-02-15 08:00,2012-02-15 08:00,CS_MSO,PT_Normal,,,,,gPaqv6swcUum4oj5m9qxbw,um/v71UCSm2K8HwIWZ36mg,,,Y,0,0,,,2012-06-20 11:04,2012-06-20 11:04,admin,admin
1337,146060,5115,23003,794,1,0,N,N,N,CP_Drtn,TT_Task,DT_FixedDUR2,RV_OK,TK_NotStart,PRS54,Delivery of Structure Material at Site (4 Wks.),,0,0,224,0,0,0,224,0,0,0,,,,2012-05-16 08:00,2012-06-12 17:00,,2012-05-16 08:00,2012-06-12 17:00,2012-05-16 08:00,2012-06-12 17:00,2012-05-16 08:00,2012-06-12 17:00,,2012-05-16 08:00,2012-06-12 17:00,,PT_Normal,,,,,khNGkvaEyUelzE1eQeO/9g,FqPfFJhLQ+SL9TfNEDcs7w,,,Y,0,0,,,2012-06-20 11:04,2012-06-20 11:04,admin,admin
1338,146061,5115,23004,794,1,0,N,N,N,CP_Drtn,TT_Task,DT_FixedDrtn,RV_OK,TK_NotStart,PRP51,"Pipeline 18"""" & Fittings",,0,0,408,0,0,0,408,0,0,0,2012-05-31 08:00,,,2012-05-31 08:00,2012-07-20 17:00,,2012-05-31 08:00,2012-07-20 17:00,2012-05-31 08:00,2012-07-20 17:00,2012-05-31 08:00,2012-07-20 17:00,,2012-05-31 08:00,2012-07-20 17:00,CS_MSO,PT_Normal,,,,,ZKH0Zqh12UuhwWhz9WFozQ,8zKzqtp8RUKmTAsXxykRFA,,,N,0,0,,,2012-06-20 11:04,2012-06-20 11:04,admin,admin
1339,146062,5115,23004,794,1,0,N,N,N,CP_Drtn,TT_Task,DT_FixedDrtn,RV_OK,TK_NotStart,PRP102,"Pipeline 8"""" & Fittings",,-0.016667,351,408,0,0,0,408,0,0,0,2012-05-30 17:00,,,2012-05-30 16:59,2012-07-20 16:59,,2012-05-31 08:00,2012-07-20 17:00,2012-05-31 08:00,2012-07-20 17:00,2012-05-31 08:00,2012-07-20 17:00,,2012-05-30 16:59,2012-07-20 16:59,CS_MSO,PT_Normal,,,,,z/lOvgpo1E6qM49oJ64o3A,Z/LKROCTRSGDBSNh6tw23g,,,N,0,0,,,2012-06-20 11:04,2012-06-20 11:04,admin,admin
1340,146063,5115,23027,794,1,0,N,N,N,CP_Drtn,TT_Task,DT_FixedDUR2,RV_OK,TK_NotStart,PRE57,Radar system,,-0.016667,904,240,0,0,0,240,0,0,0,2012-06-19 17:00,,,2012-06-19 16:59,2012-07-19 16:59,,2012-06-20 08:00,2012-07-19 17:00,2012-06-20 08:00,2012-07-19 17:00,2012-06-20 08:00,2012-07-19 17:00,,2012-06-19 16:59,2012-07-19 16:59,CS_MSO,PT_Normal,,,,,4mIKQzcCfE2GpKPrDfIy4g,fN9/pTqqS/2bIA0m5B7Ztw,,,N,0,0,,,2012-06-20 11:04,2012-06-20 11:04,admin,admin
1341,146064,5115,23027,794,1,0,N,N,N,CP_Drtn,TT_Task,DT_FixedDUR2,RV_OK,TK_NotStart,PRE58,Navegation Aids,,-0.016667,1384,360,0,0,0,360,0,0,0,2012-04-05 17:00,,,2012-04-05 16:59,2012-05-20 16:59,,2012-04-06 08:00,2012-05-20 17:00,2012-04-06 08:00,2012-05-20 17:00,2012-04-06 08:00,2012-05-20 17:00,,2012-04-05 16:59,2012-05-20 16:59,CS_MSO,PT_Normal,,,,,yweIA9KKsUCKRW5UovW96w,/agS5N51QBGq3ZFFA4yHkQ,,,N,0,0,,,2012-06-20 11:04,2012-06-20 11:04,admin,admin
1342,146065,5115,23028,794,1,0,N,N,N,CP_Drtn,TT_Task,DT_FixedDUR2,RV_OK,TK_NotStart,PRE101,Electrical Bulks,,-0.016667,512,360,0,0,0,360,0,0,0,2012-07-23 17:00,,,2012-07-23 16:59,2012-09-06 16:59,,2012-07-24 08:00,2012-09-06 17:00,2012-07-24 08:00,2012-09-06 17:00,2012-07-24 08:00,2012-09-06 17:00,,2012-07-23 16:59,2012-09-06 16:59,CS_MSO,PT_Normal,,,,,htZNPNnVwkWxVQLqJIOFQQ,vQ/i5SbETo6/zhp0lbrKxA,,,N,0,0,,,2012-06-20 11:04,2012-06-20 11:04,admin,admin
1343,146066,5115,23028,794,1,0,N,N,N,CP_Drtn,TT_Task,DT_FixedDUR2,RV_OK,TK_NotStart,PRE102,Cathodic Protection,,-0.016667,1000,360,0,0,0,360,0,0,0,2012-05-23 17:00,,,2012-05-23 16:59,2012-07-07 16:59,,2012-05-24 08:00,2012-07-07 17:00,2012-05-24 08:00,2012-07-07 17:00,2012-05-24 08:00,2012-07-07 17:00,,2012-05-23 16:59,2012-07-07 16:59,CS_MSO,PT_Normal,,,,,R5Q37OPthkiDKETB2DWMpA,Iw4lArETRiW8xPu6VxnShg,,,N,0,0,,,2012-06-20 11:04,2012-06-20 11:04,admin,admin
1344,146067,5115,23028,794,1,0,N,N,N,CP_Drtn,TT_Task,DT_FixedDUR2,RV_OK,TK_NotStart,PRE103,Solar Power,,-0.016667,912,360,0,0,0,360,0,0,0,2012-06-03 17:00,,,2012-06-03 16:59,2012-07-18 16:59,,2012-06-04 08:00,2012-07-18 17:00,2012-06-04 08:00,2012-07-18 17:00,2012-06-04 08:00,2012-07-18 17:00,,2012-06-03 16:59,2012-07-18 16:59,CS_MSO,PT_Normal,,,,,c8L9cDXMJEW3suHPx3BC1Q,VN0an5lGRoaFh0fMNvkkFA,,,N,0,0,,,2012-06-20 11:04,2012-06-20 11:04,admin,admin
1345,146068,5115,23025,794,1,0,N,N,N,CP_Drtn,TT_Task,DT_FixedDUR2,RV_OK,TK_NotStart,PRE54,F&G Detector,,-0.016667,648,360,0,0,0,360,0,0,0,2012-07-06 17:00,,,2012-07-06 16:59,2012-08-20 16:59,,2012-07-07 08:00,2012-08-20 17:00,2012-07-07 08:00,2012-08-20 17:00,2012-07-07 08:00,2012-08-20 17:00,,2012-07-06 16:59,2012-08-20 16:59,CS_MSO,PT_Normal,,,,,4p55SEBwREKCVkpCZGWlzA,VSwOK9yIRUSoxROQDvdw7g,,,N,0,0,,,2012-06-20 11:04,2012-06-20 11:04,admin,admin
1346,146069,5115,23025,794,1,0,N,N,N,CP_Drtn,TT_Task,DT_FixedDUR2,RV_OK,TK_NotStart,PRE55,Fire fighting system,,-0.016667,720,360,0,0,0,360,0,0,0,2012-06-27 17:00,,,2012-06-27 16:59,2012-08-11 16:59,,2012-06-28 08:00,2012-08-11 17:00,2012-06-28 08:00,2012-08-11 17:00,2012-06-28 08:00,2012-08-11 17:00,,2012-06-27 16:59,2012-08-11 16:59,CS_MSO,PT_Normal,,,,,Q/DfbUh30Eu9ja2b1y2XVw,tpzm+A81SOKv9OzobhMGlw,,,N,0,0,,,2012-06-20 11:04,2012-06-20 11:04,admin,admin
1347,146070,5115,23025,794,1,0,N,N,N,CP_Drtn,TT_Task,DT_FixedDUR2,RV_OK,TK_NotStart,PRE56,Life Saving Equipment,,-0.016667,664,360,0,0,0,360,0,0,0,2012-07-04 17:00,,,2012-07-04 16:59,2012-08-18 16:59,,2012-07-05 08:00,2012-08-18 17:00,2012-07-05 08:00,2012-08-18 17:00,2012-07-05 08:00,2012-08-18 17:00,,2012-07-04 16:59,2012-08-18 16:59,CS_MSO,PT_Normal,,,,,Dn6j0KBBLUq2sWFuv/JeUg,KFlMp1iuR7Ggn/R36j8DNg,,,N,0,0,,,2012-06-20 11:04,2012-06-20 11:04,admin,admin
1348,146071,5115,23026,794,1,0,N,N,N,CP_Drtn,TT_Task,DT_FixedDUR2,RV_OK,TK_NotStart,PRE59,Instrument Electical Bulk,,-0.016667,624,240,0,0,0,240,0,0,0,2012-07-24 17:00,,,2012-07-24 16:59,2012-08-23 16:59,,2012-07-25 08:00,2012-08-23 17:00,2012-07-25 08:00,2012-08-23 17:00,2012-07-25 08:00,2012-08-23 17:00,,2012-07-24 16:59,2012-08-23 16:59,CS_MSO,PT_Normal,,,,,Fbw9LZqMs0mnMDfmEybHZw,nbERwAGrT3emToa6M54rSw,,,N,0,0,,,2012-06-20 11:04,2012-06-20 11:04,admin,admin
1349,146072,5115,23026,794,1,0,N,N,N,CP_Drtn,TT_Task,DT_FixedDUR2,RV_OK,TK_NotStart,PRE60,Instrument Mechanical Bulk,,-0.016667,640,280,0,0,0,280,0,0,0,2012-07-17 17:00,,,2012-07-17 16:59,2012-08-21 16:59,,2012-07-18 08:00,2012-08-21 17:00,2012-07-18 08:00,2012-08-21 17:00,2012-07-18 08:00,2012-08-21 17:00,,2012-07-17 16:59,2012-08-21 16:59,CS_MSO,PT_Normal,,,,,VG3O1NkSqkGCVAbgNE6ydQ,I5ckdTYuQTKukOCM1JedFw,,,N,0,0,,,2012-06-20 11:04,2012-06-20 11:04,admin,admin
1350,146073,5115,23026,794,1,0,N,N,N,CP_Drtn,TT_Task,DT_FixedDUR2,RV_OK,TK_NotStart,PRE111,Field Instrument,,-0.016667,760,360,0,0,0,360,0,0,0,2012-06-22 17:00,,,2012-06-22 16:59,2012-08-06 16:59,,2012-06-23 08:00,2012-08-06 17:00,2012-06-23 08:00,2012-08-06 17:00,2012-06-23 08:00,2012-08-06 17:00,,2012-06-22 16:59,2012-08-06 16:59,CS_MSO,PT_Normal,,,,,jlHHllCVdUiRISwnl6/XIg,M/41QxsNRJS7+vZ1Rp7jJg,,,N,0,0,,,2012-06-20 11:04,2012-06-20 11:04,admin,admin
1351,146074,5115,23026,794,1,0,N,N,N,CP_Drtn,TT_Task,DT_FixedDUR2,RV_OK,TK_NotStart,PRE112,multi phase flow meter,,-0.016667,1095,456,0,0,0,456,0,0,0,2012-07-17 17:00,,,2012-07-17 16:59,2012-09-12 16:59,,2012-07-18 08:00,2012-09-12 17:00,2012-07-18 08:00,2012-09-12 17:00,2012-07-18 08:00,2012-09-12 17:00,,2012-07-17 16:59,2012-09-12 16:59,CS_MSO,PT_Normal,,,,,xeTXCKVwZkyjBsN9V5L8Iw,VbJvQNUwQvmr5G5TNU296w,,,N,0,0,,,2012-06-20 11:04,2012-06-20 11:04,admin,admin
1352,146075,5115,23026,794,1,0,N,N,N,CP_Drtn,TT_Task,DT_FixedDUR2,RV_OK,TK_NotStart,PRE113,Safe Guard system,,-0.016667,1063,240,0,0,0,240,0,0,0,2012-08-17 17:00,,,2012-08-17 16:59,2012-09-16 16:59,,2012-08-18 08:00,2012-09-16 17:00,2012-08-18 08:00,2012-09-16 17:00,2012-08-18 08:00,2012-09-16 17:00,,2012-08-17 16:59,2012-09-16 16:59,CS_MSO,PT_Normal,,,,,RPiHeJErAkmYC+ylshjU4w,jReSS16pSoan6pMZsdEk8g,,,N,0,0,,,2012-06-20 11:04,2012-06-20 11:04,admin,admin
1353,146076,5115,23018,5686,1,0,N,N,N,CP_Drtn,TT_Task,DT_FixedDUR2,RV_OK,TK_NotStart,JK51,"Jacket , Boat Landing Fabrication & Painting",,208,0,1400,0,0,0,1400,0,0,0,,,,2012-07-22 08:00,2013-02-24 16:00,,2012-06-21 08:00,2013-01-22 16:00,2012-06-21 08:00,2013-01-22 16:00,2012-06-21 08:00,2013-01-22 16:00,,2012-07-22 08:00,2013-02-24 16:00,,PT_Normal,,,,,l5cJq1pdekWeETBQKMfFrw,MJjexNjLRy6cxfkloFqepA,,,N,0,0,,,2012-06-20 11:04,2012-06-20 11:04,admin,admin
1354,146077,5115,23018,5686,1,0,N,N,N,CP_Drtn,TT_Task,DT_FixedDUR2,RV_OK,TK_NotStart,JK52,Piles Fabrication & Marking,,592,592,1000,0,0,0,1000,0,0,0,,,,2012-11-08 08:00,2013-04-07 16:00,,2012-08-06 08:00,2013-01-08 16:00,2012-08-06 08:00,2013-01-08 16:00,2012-08-06 08:00,2013-01-08 16:00,,2012-11-08 08:00,2013-04-07 16:00,,PT_Normal,,,,,Vdvgc0aiAUO8psynojiuJw,cmwt03k5QUWVZ2X2eta6kg,,,N,0,0,,,2012-06-20 11:04,2012-06-20 11:04,admin,admin
1355,146078,5115,23029,5686,1,0,N,N,N,CP_Drtn,TT_Task,DT_FixedDUR2,RV_OK,TK_NotStart,DS061,Fabrication and Painting of Below Production Deck/Legs,,0,0,840,0,0,0,840,0,0,0,,,,2012-06-13 08:00,2012-10-18 16:00,,2012-06-13 08:00,2012-10-18 16:00,2012-06-13 08:00,2012-10-18 16:00,2012-06-13 08:00,2012-10-18 16:00,,2012-06-13 08:00,2012-10-18 16:00,,PT_Normal,,,,,ZKsL1tQnnEKkEnmQwkEMJw,YDhnGt4WSampcAcCK/B2gQ,,,Y,0,0,,,2012-06-20 11:04,2012-06-20 11:04,admin,admin
1356,146079,5115,23029,5686,1,0,N,N,N,CP_Drtn,TT_Task,DT_FixedDUR2,RV_OK,TK_NotStart,DS062,Fabrication and Painting of Production Deck,,0,0,960,0,0,0,960,0,0,0,,,,2012-06-13 08:00,2012-11-08 16:00,,2012-06-13 08:00,2012-11-08 16:00,2012-06-13 08:00,2012-11-08 16:00,2012-06-13 08:00,2012-11-08 16:00,,2012-06-13 08:00,2012-11-08 16:00,,PT_Normal,,,,,uM8yOX/qLUSEm5JirjGJOw,xFi93CoKSi++4GmIMxpP9w,,,Y,0,0,,,2012-06-20 11:04,2012-06-20 11:04,admin,admin
1357,146080,5115,23029,5686,1,0,N,N,N,CP_Drtn,TT_Task,DT_FixedDUR2,RV_OK,TK_NotStart,DS063,Fabrication and Paint of Heli-Deck ( & Lifting if Required),,400,0,960,0,0,0,960,0,0,0,,,,2012-10-29 08:00,2013-03-21 16:00,,2012-08-27 08:00,2013-01-20 16:00,2012-08-27 08:00,2013-01-20 16:00,2012-08-27 08:00,2013-01-20 16:00,,2012-10-29 08:00,2013-03-21 16:00,,PT_Normal,,,,,HrpTy982lUm1PNBQyBsA6A,rvAg4dTFTzOC9LQPbMvlVA,,,N,0,0,,,2012-06-20 11:04,2012-06-20 11:04,admin,admin
1358,146081,5115,23029,5686,1,0,N,N,N,CP_Drtn,TT_Task,DT_FixedDUR2,RV_OK,TK_NotStart,DS064,Lifting Below Production Deck on High Cups,,24,0,40,0,0,0,40,0,0,0,,,,2012-10-23 08:00,2012-10-31 16:00,,2012-10-20 08:00,2012-10-24 16:00,2012-10-20 08:00,2012-10-24 16:00,2012-10-20 08:00,2012-10-24 16:00,,2012-10-23 08:00,2012-10-31 16:00,,PT_Normal,,,,,fslvWyvKNkC/mI4yTC78Zg,bQ+CxC0TQriVcwNqie/vXQ,,,N,0,0,,,2012-06-20 11:04,2012-06-20 11:04,admin,admin
1359,146082,5115,23029,5686,1,0,N,N,N,CP_Drtn,TT_Task,DT_FixedDUR2,RV_OK,TK_NotStart,DS065,Lifting Production Deck on Below Production Level,,0,0,120,0,0,0,120,0,0,0,,,,2012-11-10 08:00,2012-11-27 16:00,,2012-11-10 08:00,2012-11-27 16:00,2012-11-10 08:00,2012-11-27 16:00,2012-11-10 08:00,2012-11-27 16:00,,2012-11-10 08:00,2012-11-27 16:00,,PT_Normal,,,,,bAN1HM1Da0qYK8/nUDM7UA,kvv6UChdRT2TML26fqP2Og,,,Y,0,0,,,2012-06-20 11:04,2012-06-20 11:04,admin,admin
1360,146083,5115,23029,5686,1,0,N,N,N,CP_Drtn,TT_Task,DT_FixedDUR2,RV_OK,TK_NotStart,DS066,Fabrication & Installation of Deck Str. Miscellence / Padeyes,,80,24,960,0,0,0,960,0,0,0,,,,2012-10-17 08:00,2013-03-13 16:00,,2012-10-04 08:00,2013-03-02 16:00,2012-10-04 08:00,2013-03-02 16:00,2012-10-04 08:00,2013-03-02 16:00,,2012-10-17 08:00,2013-03-13 16:00,,PT_Normal,,,,,MOKTV7b+9kePcys5pzv7zA,CWEx43mfRrCS6ZOEt8Q5OA,,,N,0,0,,,2012-06-20 11:04,2012-06-20 11:04,admin,admin
1361,146084,5115,23029,5686,0,0,N,N,N,CP_Drtn,TT_FinMile,DT_FixedDrtn,RV_OK,TK_NotStart,DS067,Physical Weighting,,80,0,0,0,0,0,0,0,0,0,,,,2013-03-06 16:00,2013-03-06 16:00,,2013-02-23 16:00,2013-02-23 16:00,2013-02-23 16:00,2013-02-23 16:00,2013-02-23 16:00,2013-02-23 16:00,,2013-03-06 16:00,2013-03-06 16:00,,PT_Normal,,,,,oS13GfEJlUavYEt0r0RL1A,dU19c7ngSBGK2PpNjJWMWA,,,N,0,0,,,2012-06-20 11:04,2012-06-20 11:04,admin,admin
1362,146085,5115,23029,5686,1,0,N,N,N,CP_Drtn,TT_Task,DT_FixedDUR2,RV_OK,TK_NotStart,DS058,Clearanse of structure (Fab. & Painting ) Punch List,,56,56,168,0,0,0,168,0,0,0,,,,2013-03-14 08:00,2013-04-07 16:00,,2013-03-06 08:00,2013-03-30 16:00,2013-03-06 08:00,2013-03-30 16:00,2013-03-06 08:00,2013-03-30 16:00,,2013-03-14 08:00,2013-04-07 16:00,,PT_Normal,,,,,ts7EATf9+kCeRpZ7qNK1SQ,2xbSngZtS1yuYdYRZesY/A,,,N,0,0,,,2012-06-20 11:04,2012-06-20 11:04,admin,admin
1363,146086,5115,23031,5686,1,0,N,N,N,CP_Drtn,TT_Task,DT_FixedDUR2,RV_OK,TK_NotStart,TFS051,Piping and Piping Supports Fabrication and Painting,,320,320,800,0,0,0,800,0,0,0,,,,2012-09-10 08:00,2013-01-10 16:00,,2012-07-21 08:00,2012-11-24 16:00,2012-07-21 08:00,2012-11-24 16:00,2012-07-21 08:00,2012-11-24 16:00,,2012-09-10 08:00,2013-01-10 16:00,,PT_Normal,,,,,otWtfUUsLkSI+jvRi3kdEg,MmyOxGLAQBKzrY9ic24SKw,,,N,0,0,,,2012-06-20 11:04,2012-06-20 11:04,admin,admin
1364,146087,5115,23031,5686,1,0,N,N,N,CP_Drtn,TT_Task,DT_FixedDUR2,RV_OK,TK_NotStart,TSF052,Piping and Piping Supports Erection,,0,0,600,0,0,0,600,0,0,0,,,,2012-11-25 08:00,2013-02-23 16:00,,2012-11-25 08:00,2013-02-23 16:00,2012-11-25 08:00,2013-02-23 16:00,2012-11-25 08:00,2013-02-23 16:00,,2012-11-25 08:00,2013-02-23 16:00,,PT_Normal,,,,,rFl+AACDY0CD+UbiGJ+ypg,sdcBHYglTkmbL+zUfSnz1Q,,,Y,0,0,,,2012-06-20 11:04,2012-06-20 11:04,admin,admin
1365,146088,5115,23032,5686,1,0,N,N,N,CP_Drtn,TT_Task,DT_FixedDUR2,RV_OK,TK_NotStart,TSF063,Equipment Erection on Below Production Level,,24,24,56,0,0,0,56,0,0,0,,,,2012-11-01 08:00,2012-11-08 16:00,,2012-10-29 08:00,2012-11-05 16:00,2012-10-29 08:00,2012-11-05 16:00,2012-10-29 08:00,2012-11-05 16:00,,2012-11-01 08:00,2012-11-08 16:00,,PT_Normal,,,,,JGA0A5PBqkGILTv77m7IpA,z1CTK+RVT2ODKyZP+ZU/NQ,,,N,0,0,,,2012-06-20 11:04,2012-06-20 11:04,admin,admin
1366,146089,5115,23032,5686,1,0,N,N,N,CP_Drtn,TT_Task,DT_FixedDUR2,RV_OK,TK_NotStart,TSF064,Equipment Erection on Production Level,,216,216,120,0,0,0,120,0,0,0,,,,2012-12-30 08:00,2013-01-16 16:00,,2012-11-28 08:00,2012-12-15 16:00,2012-11-28 08:00,2012-12-15 16:00,2012-11-28 08:00,2012-12-15 16:00,,2012-12-30 08:00,2013-01-16 16:00,,PT_Normal,,,,,A5r4nBBwUEmXVHCb4AXkpw,uRd8e2PwTCikyeTQ2cwlXg,,,N,0,0,,,2012-06-20 11:04,2012-06-20 11:04,admin,admin
1367,146090,5115,23032,5686,1,0,N,N,N,CP_Drtn,TT_Task,DT_FixedDUR2,RV_OK,TK_NotStart,TSF065,Equipment Erection on Helideck,,400,400,56,0,0,0,56,0,0,0,,,,2013-02-16 08:00,2013-02-23 16:00,,2012-12-16 08:00,2012-12-23 16:00,2012-12-16 08:00,2012-12-23 16:00,2012-12-16 08:00,2012-12-23 16:00,,2013-02-16 08:00,2013-02-23 16:00,,PT_Normal,,,,,yAcegen52Ea2FOWfVduFfQ,aPJaRDLhRCS2fQT2L4W4XQ,,,N,0,0,,,2012-06-20 11:04,2012-06-20 11:04,admin,admin
1368,146091,5115,23033,5686,1,0,N,N,N,CP_Drtn,TT_Task,DT_FixedDUR2,RV_OK,TK_NotStart,TS57,E&I Activity,,16,16,720,0,0,0,720,0,0,0,,,,2012-11-12 08:00,2013-02-28 16:00,,2012-11-10 08:00,2013-02-26 16:00,2012-11-10 08:00,2013-02-26 16:00,2012-11-10 08:00,2013-02-26 16:00,,2012-11-12 08:00,2013-02-28 16:00,,PT_Normal,,,,,NM5u7tlFo02Zd+JXsSKHIQ,wsdfJJRZTh6vVDGXiSaIkQ,,,N,0,0,,,2012-06-20 11:04,2012-06-20 11:04,admin,admin
1369,146092,5115,23034,5686,1,0,N,N,N,CP_Drtn,TT_Task,DT_FixedDUR2,RV_OK,TK_NotStart,TS58,"Pre-commissioning """" Piping Hydrotest , Reinstatment , Megering , Continuity Test and Touch Up """"",,0,0,280,0,0,0,280,0,0,0,,,,2013-02-18 08:00,2013-03-30 16:00,,2013-02-18 08:00,2013-03-30 16:00,2013-02-18 08:00,2013-03-30 16:00,2013-02-18 08:00,2013-03-30 16:00,,2013-02-18 08:00,2013-03-30 16:00,,PT_Normal,,,,,RBXmxls9hEOSERt57gDJ0Q,lPjrgJbBSWyVdJYtkd0lWQ,,,Y,0,0,,,2012-06-20 11:04,2012-06-20 11:04,admin,admin
1370,146093,5115,23016,5686,1,0,N,N,N,CP_Drtn,TT_Task,DT_FixedDUR2,RV_OK,TK_NotStart,PL51,P/L Spools Fabrication,,832,0,720,0,0,0,720,0,0,0,,,,2012-11-07 08:00,2013-02-24 16:00,,2012-06-30 08:00,2012-10-17 16:00,2012-06-30 08:00,2012-10-17 16:00,2012-06-30 08:00,2012-10-17 16:00,,2012-11-07 08:00,2013-02-24 16:00,,PT_Normal,,,,,qng9vNH060eGxtbrcw/9Dw,HLJPh8QQQuqRB3kePFiOKw,,,N,0,0,,,2012-06-20 11:04,2012-06-20 11:04,admin,admin
1371,146094,5115,23017,5686,0,0,N,N,N,CP_Drtn,TT_Mile,DT_FixedDrtn,RV_OK,TK_NotStart,LOPS91,Arrival of 01st Shipment Material Barge ( P/L Spools),,0,128,0,0,0,0,0,0,0,0,2012-09-15 08:00,,,2012-09-15 08:00,2012-09-15 08:00,,2012-09-15 08:00,2012-09-15 08:00,2012-09-15 08:00,2012-09-15 08:00,2012-09-15 08:00,2012-09-15 08:00,,2012-09-15 08:00,2012-09-15 08:00,CS_MSO,PT_Normal,,,,,caOIwMKHxkeYDsyNUOQrxg,B4Hx/kkxQZKPJEG8DiZMqQ,,,N,0,0,,,2012-06-20 11:04,2012-06-20 11:04,admin,admin
1372,146095,5115,23017,5686,1,0,N,N,N,CP_Drtn,TT_Task,DT_FixedDUR2,RV_OK,TK_NotStart,LOPS92,1st Shipment Material Barge Preparation,,1088,0,96,0,0,0,96,0,0,0,,,,2013-03-20 08:00,2013-04-02 16:00,,2012-10-03 08:00,2012-10-17 16:00,2012-10-03 08:00,2012-10-17 16:00,2012-10-03 08:00,2012-10-17 16:00,,2013-03-20 08:00,2013-04-02 16:00,,PT_Normal,,,,,6/jyXtIHcEGvkdydkp7ySw,ffJmeitJThGKpY3WVSZDNQ,,,N,0,0,,,2012-06-20 11:04,2012-06-20 11:04,admin,admin
1373,146096,5115,23017,5686,1,0,N,N,N,CP_Drtn,TT_Task,DT_FixedDUR2,RV_OK,TK_NotStart,LOPS93,"L/O & Sea Fastening (P/L Spools 18"""" & 8"""")",,1088,0,32,0,0,0,32,0,0,0,,,,2013-04-03 08:00,2013-04-07 16:00,,2012-10-18 08:00,2012-10-22 16:00,2012-10-18 08:00,2012-10-22 16:00,2012-10-18 08:00,2012-10-22 16:00,,2013-04-03 08:00,2013-04-07 16:00,,PT_Normal,,,,,D5023iOAMkyg9uA6qHIChg,0IwOiWOuTGWgp9eZJV76QQ,,,N,0,0,,,2012-06-20 11:04,2012-06-20 11:04,admin,admin
1374,146097,5115,23020,5686,0,0,N,N,N,CP_Drtn,TT_Mile,DT_FixedDrtn,RV_OK,TK_NotStart,LOJK91,Arrival of 02nd Shipment Material Barge ( Jacket and Piles ),,0,263.983333,0,0,0,0,0,0,0,0,2012-12-01 08:01,,,2012-12-01 08:01,2012-12-01 08:01,,2012-12-01 08:01,2012-12-01 08:01,2012-12-01 08:01,2012-12-01 08:01,2012-12-01 08:01,2012-12-01 08:01,,2012-12-01 08:01,2012-12-01 08:01,CS_MSO,PT_Normal,,,,,Zp8RPoG5u0KVvnl/lLsPvQ,TZSnzFwbTP2WYUW5WMHAXA,,,N,0,0,,,2012-06-20 11:04,2012-06-20 11:04,admin,admin
1375,146098,5115,23020,5686,1,0,N,N,N,CP_Drtn,TT_Task,DT_FixedDUR2,RV_OK,TK_NotStart,LOJK92,02nd Shipment Material Barge Preparation,,208,0,96,0,0,0,96,0,0,0,,,,2013-02-11 08:00,2013-02-24 16:00,,2013-01-09 08:00,2013-01-22 16:00,2013-01-09 08:00,2013-01-22 16:00,2013-01-09 08:00,2013-01-22 16:00,,2013-02-11 08:00,2013-02-24 16:00,,PT_Normal,,,,,aXzW+cciO0mhrXojaaEuFQ,XbtAi6jCTDyBXVHSpw5OSQ,,,N,0,0,,,2012-06-20 11:04,2012-06-20 11:04,admin,admin
1376,146099,5115,23020,5686,1,0,N,N,N,CP_Drtn,TT_Task,DT_FixedDUR2,RV_OK,TK_NotStart,LOJK93,L/O & Sea fastening ( Jacket & Piles ),,208,0,56,0,0,0,56,0,0,0,,,,2013-02-25 08:00,2013-03-04 16:00,,2013-01-23 08:00,2013-01-31 16:00,2013-01-23 08:00,2013-01-31 16:00,2013-01-23 08:00,2013-01-31 16:00,,2013-02-25 08:00,2013-03-04 16:00,,PT_Normal,,,,,RA4Q7Aqx7Ee4SFLWze07lg,0h5qrf7kSZW3DGU5wFjrDw,,,N,0,0,,,2012-06-20 11:04,2012-06-20 11:04,admin,admin
1377,146100,5115,23015,5686,0,0,N,N,N,CP_Drtn,TT_Mile,DT_FixedDrtn,RV_OK,TK_NotStart,LODK91,Arrival of 03rd Shipment Material Barge ( Deck C/W TSF ),,-0.016667,104,0,0,0,0,0,0,0,0,2013-03-01 08:01,,,2013-02-28 15:59,2013-02-28 15:59,,2013-03-02 08:00,2013-03-02 08:00,2013-03-02 08:00,2013-03-02 08:00,2013-03-02 08:00,2013-03-02 08:00,,2013-02-28 15:59,2013-02-28 15:59,CS_MSO,PT_Normal,,,,,UrksA6gEoUWCenPd4GJEDw,ExIEDAbgRLSmFck0X+OxYg,,,N,0,0,,,2012-06-20 11:04,2012-06-20 11:04,admin,admin
1378,146101,5115,23015,5686,1,0,N,N,N,CP_Drtn,TT_Task,DT_FixedDUR2,RV_OK,TK_NotStart,LODK92,3rd Shipment Material Barge Preparation,,0,0,96,0,0,0,96,0,0,0,,,,2013-03-17 08:00,2013-03-30 16:00,,2013-03-17 08:00,2013-03-30 16:00,2013-03-17 08:00,2013-03-30 16:00,2013-03-17 08:00,2013-03-30 16:00,,2013-03-17 08:00,2013-03-30 16:00,,PT_Normal,,,,,ms7sWl0BJUS+XbQwIlcDew,lPDdUYuUTIydlmlcan93BQ,,,Y,0,0,,,2012-06-20 11:04,2012-06-20 11:04,admin,admin
1379,146102,5115,23015,5686,1,0,N,N,N,CP_Drtn,TT_Task,DT_FixedDUR2,RV_OK,TK_NotStart,LODK93,L/O & Sea fastening ( Deck),,0,0,56,0,0,0,56,0,0,0,,,,2013-03-31 08:00,2013-04-07 16:00,,2013-03-31 08:00,2013-04-07 16:00,2013-03-31 08:00,2013-04-07 16:00,2013-03-31 08:00,2013-04-07 16:00,,2013-03-31 08:00,2013-04-07 16:00,,PT_Normal,,,,,XxWwgIju/UGk5wykizMj6w,a29m8wZtSbmmAh/FPoIQAw,,,Y,0,0,,,2012-06-20 11:04,2012-06-20 11:04,admin,admin
1380,146103,5115,23004,794,1,0,N,N,N,CP_Drtn,TT_Task,DT_FixedDrtn,RV_OK,TK_NotStart,PRP112,"Pipeline 8"""" & Fittings",,-0.016667,2087,408,0,0,0,408,0,0,0,2012-05-30 17:00,,,2012-05-30 16:59,2012-07-20 16:59,,2012-05-31 08:00,2012-07-20 17:00,2012-05-31 08:00,2012-07-20 17:00,2012-05-31 08:00,2012-07-20 17:00,,2012-05-30 16:59,2012-07-20 16:59,CS_MSO,PT_Normal,,,,,P/JJp/dCA0+wDAMBmeUsjg,tjm2mx2cUUyxd/Z8deMfQA,,,N,0,0,,,2012-06-20 11:04,2012-06-20 11:04,admin,admin
1381,146104,5115,22987,5686,0,0,N,N,N,CP_Drtn,TT_FinMile,DT_FixedDrtn,RV_OK,TK_NotStart,GM61,Reciving Fax of Award,,-0.016667,0,0,0,0,0,0,0,0,0,2012-01-20 16:00,,,2012-01-19 16:00,2012-01-19 16:00,,2012-01-21 08:01,2012-01-21 08:01,2012-01-21 08:01,2012-01-21 08:01,2012-01-21 08:01,2012-01-21 08:01,,2012-01-19 16:00,2012-01-19 16:00,CS_MEO,PT_Normal,,,,,J4LYpENk4EiR+B3HrDsnIg,mAYBql7WQzuUeAh5RGjavw,,,N,0,0,,,2012-06-20 11:04,2012-06-20 11:04,admin,admin
1382,146105,5115,22987,5686,0,0,N,N,N,CP_Drtn,TT_Mile,DT_FixedDrtn,RV_OK,TK_NotStart,GM62,Project Fab. Start,,1951.983333,1952,0,0,0,0,0,0,0,0,,,,2013-04-07 15:59,2013-04-07 15:59,,2012-06-13 08:00,2012-06-13 08:00,2012-06-13 08:00,2012-06-13 08:00,2012-06-13 08:00,2012-06-13 08:00,,2013-04-07 15:59,2013-04-07 15:59,,PT_Normal,,,,,XxjGqiu/GUW4bqdJuBJ5NQ,MUGR7HsxSCatq1Lsy+yI2A,,,N,0,0,,,2012-06-20 11:04,2012-06-20 11:04,admin,admin
1383,146106,5115,22987,5686,0,0,N,N,N,CP_Drtn,TT_Mile,DT_FixedDrtn,RV_OK,TK_NotStart,GM64,Ready for Load out ( 02nd Shipment/ Jacket & Piles ),,208,208,0,0,0,0,0,0,0,0,,,,2013-02-25 08:00,2013-02-25 08:00,,2013-01-23 08:00,2013-01-23 08:00,2013-01-23 08:00,2013-01-23 08:00,2013-01-23 08:00,2013-01-23 08:00,,2013-02-25 08:00,2013-02-25 08:00,,PT_Normal,,,,,x7DzR0Yav0GvBctnVi5d0Q,oEdGu9OnQ0CgAkVlSv8iuw,,,N,0,0,,,2012-06-20 11:04,2012-06-20 11:04,admin,admin
1384,146107,5115,22987,5686,0,0,N,N,N,CP_Drtn,TT_Mile,DT_FixedDrtn,RV_OK,TK_NotStart,GM65,Ready for Load out ( 03rd Shipment/ Deck C/W TSF ),,55.983333,56,0,0,0,0,0,0,0,0,,,,2013-04-07 15:59,2013-04-07 15:59,,2013-03-31 08:00,2013-03-31 08:00,2013-03-31 08:00,2013-03-31 08:00,2013-03-31 08:00,2013-03-31 08:00,,2013-04-07 15:59,2013-04-07 15:59,,PT_Normal,,,,,l737+cTK2EGbHaeqJSre+A,h7hpizZeQXG79P6YGic48A,,,N,0,0,,,2012-06-20 11:04,2012-06-20 11:04,admin,admin
1385,146108,5115,22987,5686,0,0,N,N,N,CP_Drtn,TT_Mile,DT_FixedDrtn,RV_OK,TK_NotStart,GM63,"Ready for Load out (01st Shipment / Pipeline Spools 18"""" & 8"""")",,1119.983333,1120,0,0,0,0,0,0,0,0,,,,2013-04-07 15:59,2013-04-07 15:59,,2012-10-18 08:00,2012-10-18 08:00,2012-10-18 08:00,2012-10-18 08:00,2012-10-18 08:00,2012-10-18 08:00,,2013-04-07 15:59,2013-04-07 15:59,,PT_Normal,,,,,8qTDcly3Mk+LUFk7w+tJTA,hwMqvqcnTaWjHD3UCB8GZQ,,,N,0,0,,,2012-06-20 11:04,2012-06-20 11:04,admin,admin
1386,146109,5115,23011,794,1,0,N,N,N,CP_Drtn,TT_Task,DT_FixedDrtn,RV_OK,TK_NotStart,ENS63,Receiving Jacket Primary & Secondary Steel IFC DWG`s,,0,0,1104,0,0,0,1104,0,0,0,2011-11-30 08:01,,,2011-11-30 08:01,2012-04-16 08:01,,2011-11-30 08:01,2012-04-16 08:01,2011-11-30 08:01,2012-04-16 08:01,2011-11-30 08:01,2012-04-16 08:01,,2011-11-30 08:01,2012-04-16 08:01,CS_MSO,PT_Normal,,,,,6pni27i5aUiUjnX5jUndKQ,/taVGz7GStKxIdbmdm3JkA,,,N,0,0,,,2012-06-20 11:04,2012-06-20 11:04,admin,admin
1387,146110,5115,23011,794,0,0,N,N,N,CP_Drtn,TT_FinMile,DT_FixedDrtn,RV_OK,TK_NotStart,ENS64,Receiving Piles IFC DWG`s,,0,720,0,0,0,0,0,0,0,0,2012-01-17 08:01,,,2012-01-17 08:01,2012-01-17 08:01,,2012-01-17 08:01,2012-01-17 08:01,2012-01-17 08:01,2012-01-17 08:01,2012-01-17 08:01,2012-01-17 08:01,,2012-01-17 08:01,2012-01-17 08:01,CS_MEO,PT_Normal,,,,,xdnXzlj+jUWzPs96fKv+EQ,Na3Aup6tShC+yRgy8OADFw,,,N,0,0,,,2012-06-20 11:04,2012-06-20 11:04,admin,admin
1388,146111,5115,23011,794,1,0,N,N,N,CP_Drtn,TT_Task,DT_FixedDUR2,RV_OK,TK_NotStart,ENS65,Receiving Deck Str. Primary & Secondary IFC DWG`s,,0,224,328,0,0,0,328,0,0,0,2012-02-07 08:01,,,2012-02-07 08:01,2012-03-19 08:01,,2012-02-07 08:01,2012-03-19 08:01,2012-02-07 08:01,2012-03-19 08:01,2012-02-07 08:01,2012-03-19 08:01,,2012-02-07 08:01,2012-03-19 08:01,CS_MSO,PT_Normal,,,,,FE+J0Yz+jEmNqB5v+WMo3Q,fi7weAl5SEGTR2lLUeKx/w,,,N,0,0,,,2012-06-20 11:04,2012-06-20 11:04,admin,admin
1389,146112,5115,23011,794,0,0,N,N,N,CP_Drtn,TT_FinMile,DT_FixedDrtn,RV_OK,TK_NotStart,ENS61,"Receiving Final Jacket , Boat Land & Piles MTO",,135.983333,135.983333,0,0,0,0,0,0,0,0,,,,2012-02-14 17:00,2012-02-14 17:00,,2012-01-29 08:01,2012-01-29 08:01,2012-01-29 08:01,2012-01-29 08:01,2012-01-29 08:01,2012-01-29 08:01,,2012-02-14 17:00,2012-02-14 17:00,,PT_Normal,,,,,aQTsGShkHUqIdX8naJOSVg,TPEjRmwKRrq6hsy6oKat/g,,,N,0,0,,,2012-06-20 11:04,2012-06-20 11:04,admin,admin
1390,146113,5115,23011,794,0,0,N,N,N,CP_Drtn,TT_FinMile,DT_FixedDrtn,RV_OK,TK_NotStart,ENS62,Receiving Final Deck Str. MTO,,135.983333,135.983333,0,0,0,0,0,0,0,0,,,,2012-02-14 17:00,2012-02-14 17:00,,2012-01-29 08:01,2012-01-29 08:01,2012-01-29 08:01,2012-01-29 08:01,2012-01-29 08:01,2012-01-29 08:01,,2012-02-14 17:00,2012-02-14 17:00,,PT_Normal,,,,,g+l7tABMiEaqZlJI1Pn19A,6nkSfB2oQqWjhNUPP6KgpA,,,N,0,0,,,2012-06-20 11:04,2012-06-20 11:04,admin,admin
1391,146114,5115,23011,794,1,0,N,N,N,CP_Drtn,TT_Task,DT_FixedDrtn,RV_OK,TK_NotStart,ENS68,Receiving IFC Equipment fixation DWG`s,,0,1559.983333,104,0,0,0,104,0,0,0,2012-04-04 08:01,,,2012-04-04 08:01,2012-04-17 08:01,,2012-04-04 08:01,2012-04-17 08:01,2012-04-04 08:01,2012-04-17 08:01,2012-04-04 08:01,2012-04-17 08:01,,2012-04-04 08:01,2012-04-17 08:01,CS_MSO,PT_Normal,,,,,PaPsfWtsNkqJulDbVo52sg,mm1mBipHSJKSJiX6ECgsuA,,,N,0,0,,,2012-06-20 11:04,2012-06-20 11:04,admin,admin
1392,146115,5115,23011,794,1,0,N,N,N,CP_Drtn,TT_Task,DT_FixedDUR2,RV_OK,TK_NotStart,ENS66,Receiving Piping Supports IFC DWG's,,0,3078.983333,160,0,0,0,160,0,0,0,2012-02-28 08:01,,,2012-02-28 08:01,2012-03-19 08:01,,2012-02-28 08:01,2012-03-19 08:01,2012-02-28 08:01,2012-03-19 08:01,2012-02-28 08:01,2012-03-19 08:01,,2012-02-28 08:01,2012-03-19 08:01,CS_MSO,PT_Normal,,,,,wm7HzCWGtEOn9RR4sqG32Q,00Owhd0XR8uvJLKhPzMELA,,,N,0,0,,,2012-06-20 11:04,2012-06-20 11:04,admin,admin
1393,146116,5115,23011,794,1,0,N,N,N,CP_Drtn,TT_Task,DT_FixedDUR2,RV_OK,TK_NotStart,ENS67,Receiving Cable tarys Support IFC DWG's,,0,3022.983333,104,0,0,0,104,0,0,0,2012-03-13 08:01,,,2012-03-13 08:01,2012-03-26 08:01,,2012-03-13 08:01,2012-03-26 08:01,2012-03-13 08:01,2012-03-26 08:01,2012-03-13 08:01,2012-03-26 08:01,,2012-03-13 08:01,2012-03-26 08:01,CS_MSO,PT_Normal,,,,,455TlML2RES5nvkgSeFU0Q,JPgGdggzREiAYSQ7vnqU2w,,,N,0,0,,,2012-06-20 11:04,2012-06-20 11:04,admin,admin
1394,146117,5115,23011,794,1,0,N,N,N,CP_Drtn,TT_Task,DT_FixedDrtn,RV_OK,TK_NotStart,ENS69,"Receiving P/L 8"""" & 18"""" IFC DWG's",,0,2736,160,0,0,0,160,0,0,0,2012-04-10 16:00,,,2012-04-10 16:00,2012-04-30 16:00,,2012-04-10 16:00,2012-04-30 16:00,2012-04-10 16:00,2012-04-30 16:00,2012-04-10 16:00,2012-04-30 16:00,,2012-04-10 16:00,2012-04-30 16:00,CS_MSO,PT_Normal,,,,,/57iTvvh7066nPyLLnu55g,98Xxuu9fQZixtpBjPwMmlQ,,,N,0,0,,,2012-06-20 11:04,2012-06-20 11:04,admin,admin
1395,146118,5115,23012,794,1,0,N,N,N,CP_Drtn,TT_Task,DT_FixedDrtn,RV_OK,TK_NotStart,ENT63,Receiving Piping ISO`s IFC DWG's,,0,1047.983333,112,0,0,0,112,0,0,0,2012-02-27 08:01,,,2012-02-27 08:01,2012-03-12 08:01,,2012-02-27 08:01,2012-03-12 08:01,2012-02-27 08:01,2012-03-12 08:01,2012-02-27 08:01,2012-03-12 08:01,,2012-02-27 08:01,2012-03-12 08:01,CS_MSO,PT_Normal,,,,,AuWRgFpw3Ee9UoZeKvBkhQ,enOOp99+SsqEvqB5hnSgoA,,,N,0,0,,,2012-06-20 11:04,2012-06-20 11:04,admin,admin
1396,146119,5115,23012,794,0,0,N,N,N,CP_Drtn,TT_FinMile,DT_FixedDrtn,RV_OK,TK_NotStart,ENT61,Issue Approved P&ID's / Equipment List IFC DWG's,,0,3584,0,0,0,0,0,0,0,0,2012-01-15 16:00,,,2012-01-15 16:00,2012-01-15 16:00,,2012-01-15 16:00,2012-01-15 16:00,2012-01-15 16:00,2012-01-15 16:00,2012-01-15 16:00,2012-01-15 16:00,,2012-01-15 16:00,2012-01-15 16:00,CS_MEO,PT_Normal,,,,,s5Xo+yYgREyAaAotaqZOZQ,93sGNlW6QoCv/1ksHG2NzA,,,N,0,0,,,2012-06-20 11:04,2012-06-20 11:04,admin,admin
1397,146120,5115,23012,794,0,0,N,N,N,CP_Drtn,TT_FinMile,DT_FixedDrtn,RV_OK,TK_NotStart,ENT62,Issue plat plans IFC DWG's,,0,3408,0,0,0,0,0,0,0,0,2012-02-06 16:00,,,2012-02-06 16:00,2012-02-06 16:00,,2012-02-06 16:00,2012-02-06 16:00,2012-02-06 16:00,2012-02-06 16:00,2012-02-06 16:00,2012-02-06 16:00,,2012-02-06 16:00,2012-02-06 16:00,CS_MEO,PT_Normal,,,,,5uwg+KLq8UaMidedNY31Fw,FmX28kBFQpGSXexVmL7Wlw,,,N,0,0,,,2012-06-20 11:04,2012-06-20 11:04,admin,admin
1398,146121,5115,23012,5686,0,0,N,N,N,CP_Drtn,TT_FinMile,DT_FixedDrtn,RV_OK,TK_NotStart,ENT64,Issue Hydrotest maps & loops IFC DWG's,,0,2648,0,0,0,0,0,0,0,0,2012-02-28 16:00,,,2012-02-28 16:00,2012-02-28 16:00,,2012-02-28 16:00,2012-02-28 16:00,2012-02-28 16:00,2012-02-28 16:00,2012-02-28 16:00,2012-02-28 16:00,,2012-02-28 16:00,2012-02-28 16:00,CS_MEO,PT_Normal,,,,,ouNQuv3Fjkm4wFcXTH6vmg,5DGNq1VSTqKaHuj3eSEIjw,,,N,0,0,,,2012-06-20 11:04,2012-06-20 11:04,admin,admin
1399,146122,5115,23013,794,1,0,N,N,N,CP_Drtn,TT_Task,DT_FixedDUR2,RV_OK,TK_NotStart,ENE61,Receiving E&I IFC DWG`s,,0,2279.983333,776,0,0,0,776,0,0,0,2012-01-23 08:01,,,2012-01-23 08:01,2012-04-29 08:01,,2012-01-23 08:01,2012-04-29 08:01,2012-01-23 08:01,2012-04-29 08:01,2012-01-23 08:01,2012-04-29 08:01,,2012-01-23 08:01,2012-04-29 08:01,CS_MSO,PT_Normal,,,,,braQR+gMlEKW1AHeecVhNg,3Z6l8wXrS6642p/eM8yB1A,,,N,0,0,,,2012-06-20 11:04,2012-06-20 11:04,admin,admin
1400,146123,5115,22989,5686,1,0,N,N,N,CP_Drtn,TT_Task,DT_FixedDUR2,RV_OK,TK_NotStart,PF61,Pre-Fabrication of Steel Structure ( Jacket & Piles),,208,0,960,0,0,0,960,0,0,0,,,,2012-07-14 08:00,2012-12-10 16:00,,2012-06-13 08:00,2012-11-08 16:00,2012-06-13 08:00,2012-11-08 16:00,2012-06-13 08:00,2012-11-08 16:00,,2012-07-14 08:00,2012-12-10 16:00,,PT_Normal,,,,,fVyuBKS+Hk+KuEG4EQGCEg,BUUxQXUKQcKvFYRqrGtbRg,,,N,0,0,,,2012-06-20 11:04,2012-06-20 11:04,admin,admin
1401,146124,5115,23005,794,1,0,N,N,N,CP_Drtn,TT_Task,DT_FixedDUR2,RV_OK,TK_NotStart,PRT121,Piping Bulk material 1st batch,,-0.016667,536,240,0,0,0,240,0,0,0,2012-05-07 17:00,,,2012-05-07 16:59,2012-06-06 16:59,,2012-05-08 08:00,2012-06-06 17:00,2012-05-08 08:00,2012-06-06 17:00,2012-05-08 08:00,2012-06-06 17:00,,2012-05-07 16:59,2012-06-06 16:59,CS_MSO,PT_Normal,,,,,EIOR7KCr4UGMEDFbVEUH9Q,DqLN36xRQY+kZsfpyGsU9w,,,N,0,0,,,2012-06-20 11:04,2012-06-20 11:04,admin,admin
1402,146125,5115,23005,794,1,0,N,N,N,CP_Drtn,TT_Task,DT_FixedDUR2,RV_OK,TK_NotStart,PRT122,Piping Bulk material 2nd batch,,-0.016667,855,240,0,0,0,240,0,0,0,2012-06-10 17:00,,,2012-06-10 16:59,2012-07-10 16:59,,2012-06-11 08:00,2012-07-10 17:00,2012-06-11 08:00,2012-07-10 17:00,2012-06-11 08:00,2012-07-10 17:00,,2012-06-10 16:59,2012-07-10 16:59,CS_MSO,PT_Normal,,,,,yn4+l80fOkGS/CCDOSB6jQ,fRmh57i3SamJM0o1p2/3vA,,,N,0,0,,,2012-06-20 11:04,2012-06-20 11:04,admin,admin
1403,146126,5115,23005,794,1,0,N,N,N,CP_Drtn,TT_Task,DT_FixedDUR2,RV_OK,TK_NotStart,PRT63,Piping Valves Bulk material 1st batch,,-0.016667,999,112,0,0,0,112,0,0,0,2012-06-23 17:00,,,2012-06-23 16:59,2012-07-07 16:59,,2012-06-24 08:00,2012-07-07 17:00,2012-06-24 08:00,2012-07-07 17:00,2012-06-24 08:00,2012-07-07 17:00,,2012-06-23 16:59,2012-07-07 16:59,CS_MSO,PT_Normal,,,,,dh4F4MvMwUCGMFklXdvT2A,7wg9/w/MQ7a7zI20+pTM+A,,,N,0,0,,,2012-06-20 11:04,2012-06-20 11:04,admin,admin
1404,146127,5115,23005,794,1,0,N,N,N,CP_Drtn,TT_Task,DT_FixedDUR2,RV_OK,TK_NotStart,PRT64,Piping valves Bulk material 2nd batch,,-0.016667,767,112,0,0,0,112,0,0,0,2012-07-22 17:00,,,2012-07-22 16:59,2012-08-05 16:59,,2012-07-23 08:00,2012-08-05 17:00,2012-07-23 08:00,2012-08-05 17:00,2012-07-23 08:00,2012-08-05 17:00,,2012-07-22 16:59,2012-08-05 16:59,CS_MSO,PT_Normal,,,,,MCC/oLq1YkuvF5z/RRmNUw,iGFfO+XNTpqt+16+eOx2EA,,,N,0,0,,,2012-06-20 11:04,2012-06-20 11:04,admin,admin
1405,146128,5115,23005,794,1,0,N,N,N,CP_Drtn,TT_Task,DT_FixedDUR2,RV_OK,TK_NotStart,PRT65,Flanges,,-0.016667,8,360,0,0,0,360,0,0,0,2012-07-13 17:00,,,2012-07-13 16:59,2012-08-27 16:59,,2012-07-14 08:00,2012-08-27 17:00,2012-07-14 08:00,2012-08-27 17:00,2012-07-14 08:00,2012-08-27 17:00,,2012-07-13 16:59,2012-08-27 16:59,CS_MSO,PT_Normal,,,,,NegLf24G+kis+pTFsDacOg,VAq1SSMERrmj1gqIqoQiTg,,,N,0,0,,,2012-06-20 11:04,2012-06-20 11:04,admin,admin
1406,146129,5115,23005,794,1,0,N,N,N,CP_Drtn,TT_Task,DT_FixedDUR2,RV_OK,TK_NotStart,PRT66,Pressure Safety Valve,,-0.016667,1519,352,0,0,0,352,0,0,0,2012-06-04 17:00,,,2012-06-04 16:59,2012-07-18 16:59,,2012-06-05 08:00,2012-07-18 17:00,2012-06-05 08:00,2012-07-18 17:00,2012-06-05 08:00,2012-07-18 17:00,,2012-06-04 16:59,2012-07-18 16:59,CS_MSO,PT_Normal,,,,,M8aOUExGGkOydzlm40iNcA,+SvOOjbVT6SM2f4LWOHEpg,,,N,0,0,,,2012-06-20 11:04,2012-06-20 11:04,admin,admin
1407,146130,5115,23005,794,1,0,N,N,N,CP_Drtn,TT_Task,DT_FixedDUR2,RV_OK,TK_NotStart,PRT67,Pressure regulator Valve,,-0.016667,1231,240,0,0,0,240,0,0,0,2012-07-24 17:00,,,2012-07-24 16:59,2012-08-23 16:59,,2012-07-25 08:00,2012-08-23 17:00,2012-07-25 08:00,2012-08-23 17:00,2012-07-25 08:00,2012-08-23 17:00,,2012-07-24 16:59,2012-08-23 16:59,CS_MSO,PT_Normal,,,,,MiF7cjJYUUaCP4yKSaV11Q,FkVucARhQlCiyikicegBhQ,,,N,0,0,,,2012-06-20 11:04,2012-06-20 11:04,admin,admin
1408,146131,5115,23005,794,1,0,N,N,N,CP_Drtn,TT_Task,DT_FixedDUR2,RV_OK,TK_NotStart,PRT68,Shutdown Valve,,-0.016667,1135,248,0,0,0,248,0,0,0,2012-08-04 17:00,,,2012-08-04 16:59,2012-09-04 16:59,,2012-08-05 08:00,2012-09-04 17:00,2012-08-05 08:00,2012-09-04 17:00,2012-08-05 08:00,2012-09-04 17:00,,2012-08-04 16:59,2012-09-04 16:59,CS_MSO,PT_Normal,,,,,TMlyX4CPB0CEPiDJyLhXYw,GViNUzKNR0i8XYjXx02J5Q,,,N,0,0,,,2012-06-20 11:04,2012-06-20 11:04,admin,admin
1409,146132,5115,23002,794,1,0,N,N,N,CP_Drtn,TT_Task,DT_FixedDUR2,RV_OK,TK_NotStart,PRT69,Chemical Injection PKG.,,-0.016667,1264,360,0,0,0,360,0,0,0,2012-05-08 17:00,,,2012-05-08 16:59,2012-06-22 16:59,,2012-05-09 08:00,2012-06-22 17:00,2012-05-09 08:00,2012-06-22 17:00,2012-05-09 08:00,2012-06-22 17:00,,2012-05-08 16:59,2012-06-22 16:59,CS_MSO,PT_Normal,,,,,envmhc0d6EGYcQrh5kcdjA,eKvs6VRWSyOb6HNtkF9+AA,,,N,0,0,,,2012-06-20 11:04,2012-06-20 11:04,admin,admin
1410,146133,5115,23002,794,1,0,N,N,N,CP_Drtn,TT_Task,DT_FixedDUR2,RV_OK,TK_NotStart,PRT70,Launcher recivier,,-0.016667,960,360,0,0,0,360,0,0,0,2012-06-15 17:00,,,2012-06-15 16:59,2012-07-30 16:59,,2012-06-16 08:00,2012-07-30 17:00,2012-06-16 08:00,2012-07-30 17:00,2012-06-16 08:00,2012-07-30 17:00,,2012-06-15 16:59,2012-07-30 16:59,CS_MSO,PT_Normal,,,,,PnRCCiHZPEWGo2zr1KG6Wg,3IwzhhfhR3KgxUsvdJ6rqQ,,,N,0,0,,,2012-06-20 11:04,2012-06-20 11:04,admin,admin
1411,146134,5115,23002,794,1,0,N,N,N,CP_Drtn,TT_Task,DT_FixedDUR2,RV_OK,TK_NotStart,PRT131,Vent KOD,,-0.016667,864,360,0,0,0,360,0,0,0,2012-06-27 17:00,,,2012-06-27 16:59,2012-08-11 16:59,,2012-06-28 08:00,2012-08-11 17:00,2012-06-28 08:00,2012-08-11 17:00,2012-06-28 08:00,2012-08-11 17:00,,2012-06-27 16:59,2012-08-11 16:59,CS_MSO,PT_Normal,,,,,hEq7k1oO7EikpeZaIzAPRg,V+De5pWvTHyHzJo6bSHRww,,,N,0,0,,,2012-06-20 11:04,2012-06-20 11:04,admin,admin
1412,146135,5115,23002,794,1,0,N,N,N,CP_Drtn,TT_Task,DT_FixedDUR2,RV_OK,TK_NotStart,PRT132,Open Drain Tank,,-0.016667,624,360,0,0,0,360,0,0,0,2012-06-27 17:00,,,2012-06-27 16:59,2012-08-11 16:59,,2012-06-28 08:00,2012-08-11 17:00,2012-06-28 08:00,2012-08-11 17:00,2012-06-28 08:00,2012-08-11 17:00,,2012-06-27 16:59,2012-08-11 16:59,CS_MSO,PT_Normal,,,,,c80uFf5mzka5kmcMxAx0Lg,Dvo6DiXYTvSm95/lOoAUnw,,,N,0,0,,,2012-06-20 11:04,2012-06-20 11:04,admin,admin
1413,146136,5115,23003,794,1,0,N,N,N,CP_Drtn,TT_Task,DT_FixedDUR2,RV_OK,TK_NotStart,PRS63,Delivery of Structure Material (F.O.B - 13 Wks.) - (Gupco Responsability),,0,0,728,0,0,0,728,0,0,0,,,,2012-02-15 08:00,2012-05-15 17:00,,2012-02-15 08:00,2012-05-15 17:00,2012-02-15 08:00,2012-05-15 17:00,2012-02-15 08:00,2012-05-15 17:00,,2012-02-15 08:00,2012-05-15 17:00,,PT_Normal,,,,,GE47B6cv8Ei2w1sVwR1cRw,dmjGd5dtRyGQN7eIgjvWtA,,,Y,0,0,,,2012-06-20 11:04,2012-06-20 11:04,admin,admin
1414,146137,5115,23003,794,1,0,N,N,N,CP_Drtn,TT_Task,DT_FixedDUR2,RV_OK,TK_NotStart,PRS65,Material check with IFC DWG's to Prepare balance material,,1566.983333,0,56,0,0,0,56,0,0,0,,,,2012-10-28 16:00,2012-11-04 16:00,,2012-04-16 08:01,2012-04-23 08:01,2012-04-16 08:01,2012-04-23 08:01,2012-04-16 08:01,2012-04-23 08:01,,2012-10-28 16:00,2012-11-04 16:00,,PT_Normal,,,,,5AJbKGTLCUaahHyabNTqnQ,TiJCnNvxQjGqD/lEVDLgtw,,,N,0,0,,,2012-06-20 11:04,2012-06-20 11:04,admin,admin
1415,146138,5115,23003,794,1,0,N,N,N,CP_Drtn,TT_Task,DT_FixedDUR2,RV_OK,TK_NotStart,PRS66,Delivery of balance material,,1566.983333,1566.983333,1232,0,0,0,1232,0,0,0,,,,2012-11-04 16:00,2013-04-07 16:00,,2012-04-23 08:01,2012-09-24 08:01,2012-04-23 08:01,2012-09-24 08:01,2012-04-23 08:01,2012-09-24 08:01,,2012-11-04 16:00,2013-04-07 16:00,,PT_Normal,,,,,UAg6rS5pS0qRGqOWW5MVwg,oU6FnPOSQS+kCV/HY5y5yA,,,N,0,0,,,2012-06-20 11:04,2012-06-20 11:04,admin,admin
1416,146139,5115,23003,794,0,0,N,N,N,CP_Drtn,TT_Mile,DT_FixedDrtn,RV_OK,TK_NotStart,PRS61,Issue Structural Material P.O's ( Gupco Responsability),,0,64,0,0,0,0,0,0,0,0,2012-02-07 08:00,,,2012-02-07 08:00,2012-02-07 08:00,,2012-02-07 08:00,2012-02-07 08:00,2012-02-07 08:00,2012-02-07 08:00,2012-02-07 08:00,2012-02-07 08:00,,2012-02-07 08:00,2012-02-07 08:00,CS_MSO,PT_Normal,,,,,bTwWtEO3IU6n3TVn3xpHfA,xF9X1iufT72bd1+OFKWOyQ,,,N,0,0,,,2012-06-20 11:04,2012-06-20 11:04,admin,admin
1417,146140,5115,23003,794,0,0,N,N,N,CP_Drtn,TT_Mile,DT_FixedDrtn,RV_OK,TK_NotStart,PRS62,Issue LC ( Gupco Responsability),,0,0,0,0,0,0,0,0,0,0,2012-02-15 08:00,,,2012-02-15 08:00,2012-02-15 08:00,,2012-02-15 08:00,2012-02-15 08:00,2012-02-15 08:00,2012-02-15 08:00,2012-02-15 08:00,2012-02-15 08:00,,2012-02-15 08:00,2012-02-15 08:00,CS_MSO,PT_Normal,,,,,HXxMDB4p5UiiOv7U7LCy5g,um/v71UCSm2K8HwIWZ36mg,,,Y,0,0,,,2012-06-20 11:04,2012-06-20 11:04,admin,admin
1418,146141,5115,23003,794,1,0,N,N,N,CP_Drtn,TT_Task,DT_FixedDUR2,RV_OK,TK_NotStart,PRS64,Delivery of Structure Material at Site (4 Wks.),,0,0,224,0,0,0,224,0,0,0,,,,2012-05-16 08:00,2012-06-12 17:00,,2012-05-16 08:00,2012-06-12 17:00,2012-05-16 08:00,2012-06-12 17:00,2012-05-16 08:00,2012-06-12 17:00,,2012-05-16 08:00,2012-06-12 17:00,,PT_Normal,,,,,4LNhhH2Zx06XfwPHVPZv+w,FqPfFJhLQ+SL9TfNEDcs7w,,,Y,0,0,,,2012-06-20 11:04,2012-06-20 11:04,admin,admin
1419,146142,5115,23004,794,1,0,N,N,N,CP_Drtn,TT_Task,DT_FixedDrtn,RV_OK,TK_NotStart,PRP61,"Pipeline 18"""" & Fittings",,0,0,408,0,0,0,408,0,0,0,2012-05-31 08:00,,,2012-05-31 08:00,2012-07-20 17:00,,2012-05-31 08:00,2012-07-20 17:00,2012-05-31 08:00,2012-07-20 17:00,2012-05-31 08:00,2012-07-20 17:00,,2012-05-31 08:00,2012-07-20 17:00,CS_MSO,PT_Normal,,,,,34xfjDDYr0WNCHq+IrVE3w,8zKzqtp8RUKmTAsXxykRFA,,,N,0,0,,,2012-06-20 11:04,2012-06-20 11:04,admin,admin
1420,146143,5115,23004,794,1,0,N,N,N,CP_Drtn,TT_Task,DT_FixedDrtn,RV_OK,TK_NotStart,PRP122,"Pipeline 8"""" & Fittings",,-0.016667,351,408,0,0,0,408,0,0,0,2012-05-30 17:00,,,2012-05-30 16:59,2012-07-20 16:59,,2012-05-31 08:00,2012-07-20 17:00,2012-05-31 08:00,2012-07-20 17:00,2012-05-31 08:00,2012-07-20 17:00,,2012-05-30 16:59,2012-07-20 16:59,CS_MSO,PT_Normal,,,,,3FChNFUys0KwFjho7jc4wA,Z/LKROCTRSGDBSNh6tw23g,,,N,0,0,,,2012-06-20 11:04,2012-06-20 11:04,admin,admin
1421,146144,5115,23027,794,1,0,N,N,N,CP_Drtn,TT_Task,DT_FixedDUR2,RV_OK,TK_NotStart,PRE67,Radar system,,-0.016667,904,240,0,0,0,240,0,0,0,2012-06-19 17:00,,,2012-06-19 16:59,2012-07-19 16:59,,2012-06-20 08:00,2012-07-19 17:00,2012-06-20 08:00,2012-07-19 17:00,2012-06-20 08:00,2012-07-19 17:00,,2012-06-19 16:59,2012-07-19 16:59,CS_MSO,PT_Normal,,,,,i/B0yoB77EGbBbfU/wvxuQ,fN9/pTqqS/2bIA0m5B7Ztw,,,N,0,0,,,2012-06-20 11:04,2012-06-20 11:04,admin,admin
1422,146145,5115,23027,794,1,0,N,N,N,CP_Drtn,TT_Task,DT_FixedDUR2,RV_OK,TK_NotStart,PRE68,Navegation Aids,,-0.016667,1384,360,0,0,0,360,0,0,0,2012-04-05 17:00,,,2012-04-05 16:59,2012-05-20 16:59,,2012-04-06 08:00,2012-05-20 17:00,2012-04-06 08:00,2012-05-20 17:00,2012-04-06 08:00,2012-05-20 17:00,,2012-04-05 16:59,2012-05-20 16:59,CS_MSO,PT_Normal,,,,,Cg7SMUYcT0ahYWsLB/x9aQ,/agS5N51QBGq3ZFFA4yHkQ,,,N,0,0,,,2012-06-20 11:04,2012-06-20 11:04,admin,admin
1423,146146,5115,23028,794,1,0,N,N,N,CP_Drtn,TT_Task,DT_FixedDUR2,RV_OK,TK_NotStart,PRE121,Electrical Bulks,,-0.016667,512,360,0,0,0,360,0,0,0,2012-07-23 17:00,,,2012-07-23 16:59,2012-09-06 16:59,,2012-07-24 08:00,2012-09-06 17:00,2012-07-24 08:00,2012-09-06 17:00,2012-07-24 08:00,2012-09-06 17:00,,2012-07-23 16:59,2012-09-06 16:59,CS_MSO,PT_Normal,,,,,U6qSShFDiEWv9S05QhNR2A,vQ/i5SbETo6/zhp0lbrKxA,,,N,0,0,,,2012-06-20 11:04,2012-06-20 11:04,admin,admin
1424,146147,5115,23028,794,1,0,N,N,N,CP_Drtn,TT_Task,DT_FixedDUR2,RV_OK,TK_NotStart,PRE122,Cathodic Protection,,-0.016667,1000,360,0,0,0,360,0,0,0,2012-05-23 17:00,,,2012-05-23 16:59,2012-07-07 16:59,,2012-05-24 08:00,2012-07-07 17:00,2012-05-24 08:00,2012-07-07 17:00,2012-05-24 08:00,2012-07-07 17:00,,2012-05-23 16:59,2012-07-07 16:59,CS_MSO,PT_Normal,,,,,uDJIcSBm/EiTr9bSmXqHvQ,Iw4lArETRiW8xPu6VxnShg,,,N,0,0,,,2012-06-20 11:04,2012-06-20 11:04,admin,admin
1425,146148,5115,23028,794,1,0,N,N,N,CP_Drtn,TT_Task,DT_FixedDUR2,RV_OK,TK_NotStart,PRE123,Solar Power,,-0.016667,912,360,0,0,0,360,0,0,0,2012-06-03 17:00,,,2012-06-03 16:59,2012-07-18 16:59,,2012-06-04 08:00,2012-07-18 17:00,2012-06-04 08:00,2012-07-18 17:00,2012-06-04 08:00,2012-07-18 17:00,,2012-06-03 16:59,2012-07-18 16:59,CS_MSO,PT_Normal,,,,,EaM/mG9wfkKU74N9S7VEKA,VN0an5lGRoaFh0fMNvkkFA,,,N,0,0,,,2012-06-20 11:04,2012-06-20 11:04,admin,admin
1426,146149,5115,23025,794,1,0,N,N,N,CP_Drtn,TT_Task,DT_FixedDUR2,RV_OK,TK_NotStart,PRE64,F&G Detector,,-0.016667,648,360,0,0,0,360,0,0,0,2012-07-06 17:00,,,2012-07-06 16:59,2012-08-20 16:59,,2012-07-07 08:00,2012-08-20 17:00,2012-07-07 08:00,2012-08-20 17:00,2012-07-07 08:00,2012-08-20 17:00,,2012-07-06 16:59,2012-08-20 16:59,CS_MSO,PT_Normal,,,,,YsagKVC6K0OCsa7cuIFfyg,VSwOK9yIRUSoxROQDvdw7g,,,N,0,0,,,2012-06-20 11:04,2012-06-20 11:04,admin,admin
1427,146150,5115,23025,794,1,0,N,N,N,CP_Drtn,TT_Task,DT_FixedDUR2,RV_OK,TK_NotStart,PRE65,Fire fighting system,,-0.016667,720,360,0,0,0,360,0,0,0,2012-06-27 17:00,,,2012-06-27 16:59,2012-08-11 16:59,,2012-06-28 08:00,2012-08-11 17:00,2012-06-28 08:00,2012-08-11 17:00,2012-06-28 08:00,2012-08-11 17:00,,2012-06-27 16:59,2012-08-11 16:59,CS_MSO,PT_Normal,,,,,hfe565lWzUSdWWJVmGPRoA,tpzm+A81SOKv9OzobhMGlw,,,N,0,0,,,2012-06-20 11:04,2012-06-20 11:04,admin,admin
1428,146151,5115,23025,794,1,0,N,N,N,CP_Drtn,TT_Task,DT_FixedDUR2,RV_OK,TK_NotStart,PRE66,Life Saving Equipment,,-0.016667,664,360,0,0,0,360,0,0,0,2012-07-04 17:00,,,2012-07-04 16:59,2012-08-18 16:59,,2012-07-05 08:00,2012-08-18 17:00,2012-07-05 08:00,2012-08-18 17:00,2012-07-05 08:00,2012-08-18 17:00,,2012-07-04 16:59,2012-08-18 16:59,CS_MSO,PT_Normal,,,,,hI96o7NVJ0Sq28waFsBZWQ,KFlMp1iuR7Ggn/R36j8DNg,,,N,0,0,,,2012-06-20 11:04,2012-06-20 11:04,admin,admin
1429,146152,5115,23026,794,1,0,N,N,N,CP_Drtn,TT_Task,DT_FixedDUR2,RV_OK,TK_NotStart,PRE69,Instrument Electical Bulk,,-0.016667,624,240,0,0,0,240,0,0,0,2012-07-24 17:00,,,2012-07-24 16:59,2012-08-23 16:59,,2012-07-25 08:00,2012-08-23 17:00,2012-07-25 08:00,2012-08-23 17:00,2012-07-25 08:00,2012-08-23 17:00,,2012-07-24 16:59,2012-08-23 16:59,CS_MSO,PT_Normal,,,,,zph8aL7cj0SmI4sCTpFp4Q,nbERwAGrT3emToa6M54rSw,,,N,0,0,,,2012-06-20 11:04,2012-06-20 11:04,admin,admin
1430,146153,5115,23026,794,1,0,N,N,N,CP_Drtn,TT_Task,DT_FixedDUR2,RV_OK,TK_NotStart,PRE70,Instrument Mechanical Bulk,,-0.016667,640,280,0,0,0,280,0,0,0,2012-07-17 17:00,,,2012-07-17 16:59,2012-08-21 16:59,,2012-07-18 08:00,2012-08-21 17:00,2012-07-18 08:00,2012-08-21 17:00,2012-07-18 08:00,2012-08-21 17:00,,2012-07-17 16:59,2012-08-21 16:59,CS_MSO,PT_Normal,,,,,uRl2nA0fpE6bmWG5PU2/Fg,I5ckdTYuQTKukOCM1JedFw,,,N,0,0,,,2012-06-20 11:04,2012-06-20 11:04,admin,admin
1431,146154,5115,23026,794,1,0,N,N,N,CP_Drtn,TT_Task,DT_FixedDUR2,RV_OK,TK_NotStart,PRE131,Field Instrument,,-0.016667,760,360,0,0,0,360,0,0,0,2012-06-22 17:00,,,2012-06-22 16:59,2012-08-06 16:59,,2012-06-23 08:00,2012-08-06 17:00,2012-06-23 08:00,2012-08-06 17:00,2012-06-23 08:00,2012-08-06 17:00,,2012-06-22 16:59,2012-08-06 16:59,CS_MSO,PT_Normal,,,,,ht4C1c+8cUiVHvIZ8efbpg,M/41QxsNRJS7+vZ1Rp7jJg,,,N,0,0,,,2012-06-20 11:04,2012-06-20 11:04,admin,admin
1432,146155,5115,23026,794,1,0,N,N,N,CP_Drtn,TT_Task,DT_FixedDUR2,RV_OK,TK_NotStart,PRE132,multi phase flow meter,,-0.016667,1095,456,0,0,0,456,0,0,0,2012-07-17 17:00,,,2012-07-17 16:59,2012-09-12 16:59,,2012-07-18 08:00,2012-09-12 17:00,2012-07-18 08:00,2012-09-12 17:00,2012-07-18 08:00,2012-09-12 17:00,,2012-07-17 16:59,2012-09-12 16:59,CS_MSO,PT_Normal,,,,,7TBV6CKZnkC7YLDjdD7o6w,VbJvQNUwQvmr5G5TNU296w,,,N,0,0,,,2012-06-20 11:04,2012-06-20 11:04,admin,admin
1433,146156,5115,23026,794,1,0,N,N,N,CP_Drtn,TT_Task,DT_FixedDUR2,RV_OK,TK_NotStart,PRE133,Safe Guard system,,-0.016667,1063,240,0,0,0,240,0,0,0,2012-08-17 17:00,,,2012-08-17 16:59,2012-09-16 16:59,,2012-08-18 08:00,2012-09-16 17:00,2012-08-18 08:00,2012-09-16 17:00,2012-08-18 08:00,2012-09-16 17:00,,2012-08-17 16:59,2012-09-16 16:59,CS_MSO,PT_Normal,,,,,vbHNZESA2ka7gCZgMCYnrA,jReSS16pSoan6pMZsdEk8g,,,N,0,0,,,2012-06-20 11:04,2012-06-20 11:04,admin,admin
1434,146157,5115,23018,5686,1,0,N,N,N,CP_Drtn,TT_Task,DT_FixedDUR2,RV_OK,TK_NotStart,JK61,"Jacket , Boat Landing Fabrication & Painting",,208,0,1400,0,0,0,1400,0,0,0,,,,2012-07-22 08:00,2013-02-24 16:00,,2012-06-21 08:00,2013-01-22 16:00,2012-06-21 08:00,2013-01-22 16:00,2012-06-21 08:00,2013-01-22 16:00,,2012-07-22 08:00,2013-02-24 16:00,,PT_Normal,,,,,wQW5VFviqESvLuKiclWRZA,MJjexNjLRy6cxfkloFqepA,,,N,0,0,,,2012-06-20 11:04,2012-06-20 11:04,admin,admin
1435,146158,5115,23018,5686,1,0,N,N,N,CP_Drtn,TT_Task,DT_FixedDUR2,RV_OK,TK_NotStart,JK62,Piles Fabrication & Marking,,592,592,1000,0,0,0,1000,0,0,0,,,,2012-11-08 08:00,2013-04-07 16:00,,2012-08-06 08:00,2013-01-08 16:00,2012-08-06 08:00,2013-01-08 16:00,2012-08-06 08:00,2013-01-08 16:00,,2012-11-08 08:00,2013-04-07 16:00,,PT_Normal,,,,,Y515rDN9O0KXFnZDUPx8/g,cmwt03k5QUWVZ2X2eta6kg,,,N,0,0,,,2012-06-20 11:04,2012-06-20 11:04,admin,admin
1436,146159,5115,23029,5686,1,0,N,N,N,CP_Drtn,TT_Task,DT_FixedDUR2,RV_OK,TK_NotStart,DS071,Fabrication and Painting of Below Production Deck/Legs,,0,0,840,0,0,0,840,0,0,0,,,,2012-06-13 08:00,2012-10-18 16:00,,2012-06-13 08:00,2012-10-18 16:00,2012-06-13 08:00,2012-10-18 16:00,2012-06-13 08:00,2012-10-18 16:00,,2012-06-13 08:00,2012-10-18 16:00,,PT_Normal,,,,,CeBiSwOPN0qMsZ2JPgl1PA,YDhnGt4WSampcAcCK/B2gQ,,,Y,0,0,,,2012-06-20 11:04,2012-06-20 11:04,admin,admin
1437,146160,5115,23029,5686,1,0,N,N,N,CP_Drtn,TT_Task,DT_FixedDUR2,RV_OK,TK_NotStart,DS072,Fabrication and Painting of Production Deck,,0,0,960,0,0,0,960,0,0,0,,,,2012-06-13 08:00,2012-11-08 16:00,,2012-06-13 08:00,2012-11-08 16:00,2012-06-13 08:00,2012-11-08 16:00,2012-06-13 08:00,2012-11-08 16:00,,2012-06-13 08:00,2012-11-08 16:00,,PT_Normal,,,,,9S8eLiXUFkm5YJraWjUrDw,xFi93CoKSi++4GmIMxpP9w,,,Y,0,0,,,2012-06-20 11:04,2012-06-20 11:04,admin,admin
1438,146161,5115,23029,5686,1,0,N,N,N,CP_Drtn,TT_Task,DT_FixedDUR2,RV_OK,TK_NotStart,DS073,Fabrication and Paint of Heli-Deck ( & Lifting if Required),,400,0,960,0,0,0,960,0,0,0,,,,2012-10-29 08:00,2013-03-21 16:00,,2012-08-27 08:00,2013-01-20 16:00,2012-08-27 08:00,2013-01-20 16:00,2012-08-27 08:00,2013-01-20 16:00,,2012-10-29 08:00,2013-03-21 16:00,,PT_Normal,,,,,bqYngeNZ5Ee0R2KxNgKKXQ,rvAg4dTFTzOC9LQPbMvlVA,,,N,0,0,,,2012-06-20 11:04,2012-06-20 11:04,admin,admin
1439,146162,5115,23029,5686,1,0,N,N,N,CP_Drtn,TT_Task,DT_FixedDUR2,RV_OK,TK_NotStart,DS074,Lifting Below Production Deck on High Cups,,24,0,40,0,0,0,40,0,0,0,,,,2012-10-23 08:00,2012-10-31 16:00,,2012-10-20 08:00,2012-10-24 16:00,2012-10-20 08:00,2012-10-24 16:00,2012-10-20 08:00,2012-10-24 16:00,,2012-10-23 08:00,2012-10-31 16:00,,PT_Normal,,,,,cF+DZoN03UilnxgQaBnuxw,bQ+CxC0TQriVcwNqie/vXQ,,,N,0,0,,,2012-06-20 11:04,2012-06-20 11:04,admin,admin
1440,146163,5115,23029,5686,1,0,N,N,N,CP_Drtn,TT_Task,DT_FixedDUR2,RV_OK,TK_NotStart,DS075,Lifting Production Deck on Below Production Level,,0,0,120,0,0,0,120,0,0,0,,,,2012-11-10 08:00,2012-11-27 16:00,,2012-11-10 08:00,2012-11-27 16:00,2012-11-10 08:00,2012-11-27 16:00,2012-11-10 08:00,2012-11-27 16:00,,2012-11-10 08:00,2012-11-27 16:00,,PT_Normal,,,,,VeBf5N5ps0qsNT8DCyxT0A,kvv6UChdRT2TML26fqP2Og,,,Y,0,0,,,2012-06-20 11:04,2012-06-20 11:04,admin,admin
1441,146164,5115,23029,5686,1,0,N,N,N,CP_Drtn,TT_Task,DT_FixedDUR2,RV_OK,TK_NotStart,DS076,Fabrication & Installation of Deck Str. Miscellence / Padeyes,,80,24,960,0,0,0,960,0,0,0,,,,2012-10-17 08:00,2013-03-13 16:00,,2012-10-04 08:00,2013-03-02 16:00,2012-10-04 08:00,2013-03-02 16:00,2012-10-04 08:00,2013-03-02 16:00,,2012-10-17 08:00,2013-03-13 16:00,,PT_Normal,,,,,9+npsR3qg0CpGOMJmY4Wkg,CWEx43mfRrCS6ZOEt8Q5OA,,,N,0,0,,,2012-06-20 11:04,2012-06-20 11:04,admin,admin
1442,146165,5115,23029,5686,0,0,N,N,N,CP_Drtn,TT_FinMile,DT_FixedDrtn,RV_OK,TK_NotStart,DS077,Physical Weighting,,80,0,0,0,0,0,0,0,0,0,,,,2013-03-06 16:00,2013-03-06 16:00,,2013-02-23 16:00,2013-02-23 16:00,2013-02-23 16:00,2013-02-23 16:00,2013-02-23 16:00,2013-02-23 16:00,,2013-03-06 16:00,2013-03-06 16:00,,PT_Normal,,,,,fB2fiW1KlEqikuUAjgJPgA,dU19c7ngSBGK2PpNjJWMWA,,,N,0,0,,,2012-06-20 11:04,2012-06-20 11:04,admin,admin
1443,146166,5115,23029,5686,1,0,N,N,N,CP_Drtn,TT_Task,DT_FixedDUR2,RV_OK,TK_NotStart,DS068,Clearanse of structure (Fab. & Painting ) Punch List,,56,56,168,0,0,0,168,0,0,0,,,,2013-03-14 08:00,2013-04-07 16:00,,2013-03-06 08:00,2013-03-30 16:00,2013-03-06 08:00,2013-03-30 16:00,2013-03-06 08:00,2013-03-30 16:00,,2013-03-14 08:00,2013-04-07 16:00,,PT_Normal,,,,,ESrA6SDS1UyjOSFnHRp4FA,2xbSngZtS1yuYdYRZesY/A,,,N,0,0,,,2012-06-20 11:04,2012-06-20 11:04,admin,admin
1444,146167,5115,23031,5686,1,0,N,N,N,CP_Drtn,TT_Task,DT_FixedDUR2,RV_OK,TK_NotStart,TFS061,Piping and Piping Supports Fabrication and Painting,,320,320,800,0,0,0,800,0,0,0,,,,2012-09-10 08:00,2013-01-10 16:00,,2012-07-21 08:00,2012-11-24 16:00,2012-07-21 08:00,2012-11-24 16:00,2012-07-21 08:00,2012-11-24 16:00,,2012-09-10 08:00,2013-01-10 16:00,,PT_Normal,,,,,PK35jER8A06Rdq0QxqHpKQ,MmyOxGLAQBKzrY9ic24SKw,,,N,0,0,,,2012-06-20 11:04,2012-06-20 11:04,admin,admin
1445,146168,5115,23031,5686,1,0,N,N,N,CP_Drtn,TT_Task,DT_FixedDUR2,RV_OK,TK_NotStart,TSF062,Piping and Piping Supports Erection,,0,0,600,0,0,0,600,0,0,0,,,,2012-11-25 08:00,2013-02-23 16:00,,2012-11-25 08:00,2013-02-23 16:00,2012-11-25 08:00,2013-02-23 16:00,2012-11-25 08:00,2013-02-23 16:00,,2012-11-25 08:00,2013-02-23 16:00,,PT_Normal,,,,,yUOahIuUhEmlnVafYoWN2w,sdcBHYglTkmbL+zUfSnz1Q,,,Y,0,0,,,2012-06-20 11:04,2012-06-20 11:04,admin,admin
1446,146169,5115,23032,5686,1,0,N,N,N,CP_Drtn,TT_Task,DT_FixedDUR2,RV_OK,TK_NotStart,TSF073,Equipment Erection on Below Production Level,,24,24,56,0,0,0,56,0,0,0,,,,2012-11-01 08:00,2012-11-08 16:00,,2012-10-29 08:00,2012-11-05 16:00,2012-10-29 08:00,2012-11-05 16:00,2012-10-29 08:00,2012-11-05 16:00,,2012-11-01 08:00,2012-11-08 16:00,,PT_Normal,,,,,ydXdjZnvo0Ks4nipCYeqSw,z1CTK+RVT2ODKyZP+ZU/NQ,,,N,0,0,,,2012-06-20 11:04,2012-06-20 11:04,admin,admin
1447,146170,5115,23032,5686,1,0,N,N,N,CP_Drtn,TT_Task,DT_FixedDUR2,RV_OK,TK_NotStart,TSF074,Equipment Erection on Production Level,,216,216,120,0,0,0,120,0,0,0,,,,2012-12-30 08:00,2013-01-16 16:00,,2012-11-28 08:00,2012-12-15 16:00,2012-11-28 08:00,2012-12-15 16:00,2012-11-28 08:00,2012-12-15 16:00,,2012-12-30 08:00,2013-01-16 16:00,,PT_Normal,,,,,Vmhag5wDgEanLBU9MzDCoA,uRd8e2PwTCikyeTQ2cwlXg,,,N,0,0,,,2012-06-20 11:04,2012-06-20 11:04,admin,admin
1448,146171,5115,23032,5686,1,0,N,N,N,CP_Drtn,TT_Task,DT_FixedDUR2,RV_OK,TK_NotStart,TSF075,Equipment Erection on Helideck,,400,400,56,0,0,0,56,0,0,0,,,,2013-02-16 08:00,2013-02-23 16:00,,2012-12-16 08:00,2012-12-23 16:00,2012-12-16 08:00,2012-12-23 16:00,2012-12-16 08:00,2012-12-23 16:00,,2013-02-16 08:00,2013-02-23 16:00,,PT_Normal,,,,,la35SV0400qAibg6sjgcHw,aPJaRDLhRCS2fQT2L4W4XQ,,,N,0,0,,,2012-06-20 11:04,2012-06-20 11:04,admin,admin
1449,146172,5115,23033,5686,1,0,N,N,N,CP_Drtn,TT_Task,DT_FixedDUR2,RV_OK,TK_NotStart,TS67,E&I Activity,,16,16,720,0,0,0,720,0,0,0,,,,2012-11-12 08:00,2013-02-28 16:00,,2012-11-10 08:00,2013-02-26 16:00,2012-11-10 08:00,2013-02-26 16:00,2012-11-10 08:00,2013-02-26 16:00,,2012-11-12 08:00,2013-02-28 16:00,,PT_Normal,,,,,YFUeELL3nE6OEdUEuUcrUw,wsdfJJRZTh6vVDGXiSaIkQ,,,N,0,0,,,2012-06-20 11:04,2012-06-20 11:04,admin,admin
1450,146173,5115,23034,5686,1,0,N,N,N,CP_Drtn,TT_Task,DT_FixedDUR2,RV_OK,TK_NotStart,TS68,"Pre-commissioning """" Piping Hydrotest , Reinstatment , Megering , Continuity Test and Touch Up """"",,0,0,280,0,0,0,280,0,0,0,,,,2013-02-18 08:00,2013-03-30 16:00,,2013-02-18 08:00,2013-03-30 16:00,2013-02-18 08:00,2013-03-30 16:00,2013-02-18 08:00,2013-03-30 16:00,,2013-02-18 08:00,2013-03-30 16:00,,PT_Normal,,,,,NxLmboaZOkqm5SK6moMVhQ,lPjrgJbBSWyVdJYtkd0lWQ,,,Y,0,0,,,2012-06-20 11:04,2012-06-20 11:04,admin,admin
1451,146174,5115,23016,5686,1,0,N,N,N,CP_Drtn,TT_Task,DT_FixedDUR2,RV_OK,TK_NotStart,PL61,P/L Spools Fabrication,,832,0,720,0,0,0,720,0,0,0,,,,2012-11-07 08:00,2013-02-24 16:00,,2012-06-30 08:00,2012-10-17 16:00,2012-06-30 08:00,2012-10-17 16:00,2012-06-30 08:00,2012-10-17 16:00,,2012-11-07 08:00,2013-02-24 16:00,,PT_Normal,,,,,ebunltf+dEyPgNBPJRHHMg,HLJPh8QQQuqRB3kePFiOKw,,,N,0,0,,,2012-06-20 11:04,2012-06-20 11:04,admin,admin
1452,146175,5115,23017,5686,0,0,N,N,N,CP_Drtn,TT_Mile,DT_FixedDrtn,RV_OK,TK_NotStart,LOPS101,Arrival of 01st Shipment Material Barge ( P/L Spools),,0,128,0,0,0,0,0,0,0,0,2012-09-15 08:00,,,2012-09-15 08:00,2012-09-15 08:00,,2012-09-15 08:00,2012-09-15 08:00,2012-09-15 08:00,2012-09-15 08:00,2012-09-15 08:00,2012-09-15 08:00,,2012-09-15 08:00,2012-09-15 08:00,CS_MSO,PT_Normal,,,,,cF1WevfV3UeZST4QyYHOKQ,B4Hx/kkxQZKPJEG8DiZMqQ,,,N,0,0,,,2012-06-20 11:04,2012-06-20 11:04,admin,admin
1453,146176,5115,23017,5686,1,0,N,N,N,CP_Drtn,TT_Task,DT_FixedDUR2,RV_OK,TK_NotStart,LOPS102,1st Shipment Material Barge Preparation,,1088,0,96,0,0,0,96,0,0,0,,,,2013-03-20 08:00,2013-04-02 16:00,,2012-10-03 08:00,2012-10-17 16:00,2012-10-03 08:00,2012-10-17 16:00,2012-10-03 08:00,2012-10-17 16:00,,2013-03-20 08:00,2013-04-02 16:00,,PT_Normal,,,,,EXOO5oATikWEIFrxHkMJVQ,ffJmeitJThGKpY3WVSZDNQ,,,N,0,0,,,2012-06-20 11:04,2012-06-20 11:04,admin,admin
1454,146177,5115,23017,5686,1,0,N,N,N,CP_Drtn,TT_Task,DT_FixedDUR2,RV_OK,TK_NotStart,LOPS103,"L/O & Sea Fastening (P/L Spools 18"""" & 8"""")",,1088,0,32,0,0,0,32,0,0,0,,,,2013-04-03 08:00,2013-04-07 16:00,,2012-10-18 08:00,2012-10-22 16:00,2012-10-18 08:00,2012-10-22 16:00,2012-10-18 08:00,2012-10-22 16:00,,2013-04-03 08:00,2013-04-07 16:00,,PT_Normal,,,,,epsi6gR+Zk+M9UxEExLTtQ,0IwOiWOuTGWgp9eZJV76QQ,,,N,0,0,,,2012-06-20 11:04,2012-06-20 11:04,admin,admin
1455,146178,5115,23020,5686,0,0,N,N,N,CP_Drtn,TT_Mile,DT_FixedDrtn,RV_OK,TK_NotStart,LOJK101,Arrival of 02nd Shipment Material Barge ( Jacket and Piles ),,0,263.983333,0,0,0,0,0,0,0,0,2012-12-01 08:01,,,2012-12-01 08:01,2012-12-01 08:01,,2012-12-01 08:01,2012-12-01 08:01,2012-12-01 08:01,2012-12-01 08:01,2012-12-01 08:01,2012-12-01 08:01,,2012-12-01 08:01,2012-12-01 08:01,CS_MSO,PT_Normal,,,,,sveinoibtkuvcnliOjxC6g,TZSnzFwbTP2WYUW5WMHAXA,,,N,0,0,,,2012-06-20 11:04,2012-06-20 11:04,admin,admin
1456,146179,5115,23020,5686,1,0,N,N,N,CP_Drtn,TT_Task,DT_FixedDUR2,RV_OK,TK_NotStart,LOJK102,02nd Shipment Material Barge Preparation,,208,0,96,0,0,0,96,0,0,0,,,,2013-02-11 08:00,2013-02-24 16:00,,2013-01-09 08:00,2013-01-22 16:00,2013-01-09 08:00,2013-01-22 16:00,2013-01-09 08:00,2013-01-22 16:00,,2013-02-11 08:00,2013-02-24 16:00,,PT_Normal,,,,,Mr0/BWAeTkys6bO0PSQOMw,XbtAi6jCTDyBXVHSpw5OSQ,,,N,0,0,,,2012-06-20 11:04,2012-06-20 11:04,admin,admin
1457,146180,5115,23020,5686,1,0,N,N,N,CP_Drtn,TT_Task,DT_FixedDUR2,RV_OK,TK_NotStart,LOJK103,L/O & Sea fastening ( Jacket & Piles ),,208,0,56,0,0,0,56,0,0,0,,,,2013-02-25 08:00,2013-03-04 16:00,,2013-01-23 08:00,2013-01-31 16:00,2013-01-23 08:00,2013-01-31 16:00,2013-01-23 08:00,2013-01-31 16:00,,2013-02-25 08:00,2013-03-04 16:00,,PT_Normal,,,,,V+WoInztX0GsQAIf1mIFbg,0h5qrf7kSZW3DGU5wFjrDw,,,N,0,0,,,2012-06-20 11:04,2012-06-20 11:04,admin,admin
1458,146181,5115,23015,5686,0,0,N,N,N,CP_Drtn,TT_Mile,DT_FixedDrtn,RV_OK,TK_NotStart,LODK101,Arrival of 03rd Shipment Material Barge ( Deck C/W TSF ),,-0.016667,104,0,0,0,0,0,0,0,0,2013-03-01 08:01,,,2013-02-28 15:59,2013-02-28 15:59,,2013-03-02 08:00,2013-03-02 08:00,2013-03-02 08:00,2013-03-02 08:00,2013-03-02 08:00,2013-03-02 08:00,,2013-02-28 15:59,2013-02-28 15:59,CS_MSO,PT_Normal,,,,,MPxLwjKOwEaufQrBCL9+fg,ExIEDAbgRLSmFck0X+OxYg,,,N,0,0,,,2012-06-20 11:04,2012-06-20 11:04,admin,admin
1459,146182,5115,23015,5686,1,0,N,N,N,CP_Drtn,TT_Task,DT_FixedDUR2,RV_OK,TK_NotStart,LODK102,3rd Shipment Material Barge Preparation,,0,0,96,0,0,0,96,0,0,0,,,,2013-03-17 08:00,2013-03-30 16:00,,2013-03-17 08:00,2013-03-30 16:00,2013-03-17 08:00,2013-03-30 16:00,2013-03-17 08:00,2013-03-30 16:00,,2013-03-17 08:00,2013-03-30 16:00,,PT_Normal,,,,,VmorlBCp1EqM/M8i46v2zw,lPDdUYuUTIydlmlcan93BQ,,,Y,0,0,,,2012-06-20 11:04,2012-06-20 11:04,admin,admin
1460,146183,5115,23015,5686,1,0,N,N,N,CP_Drtn,TT_Task,DT_FixedDUR2,RV_OK,TK_NotStart,LODK103,L/O & Sea fastening ( Deck),,0,0,56,0,0,0,56,0,0,0,,,,2013-03-31 08:00,2013-04-07 16:00,,2013-03-31 08:00,2013-04-07 16:00,2013-03-31 08:00,2013-04-07 16:00,2013-03-31 08:00,2013-04-07 16:00,,2013-03-31 08:00,2013-04-07 16:00,,PT_Normal,,,,,i9BLhAHWLES+DPxXzr9mwA,a29m8wZtSbmmAh/FPoIQAw,,,Y,0,0,,,2012-06-20 11:04,2012-06-20 11:04,admin,admin
1461,146184,5115,23004,794,1,0,N,N,N,CP_Drtn,TT_Task,DT_FixedDrtn,RV_OK,TK_NotStart,PRP132,"Pipeline 8"""" & Fittings",,-0.016667,2087,408,0,0,0,408,0,0,0,2012-05-30 17:00,,,2012-05-30 16:59,2012-07-20 16:59,,2012-05-31 08:00,2012-07-20 17:00,2012-05-31 08:00,2012-07-20 17:00,2012-05-31 08:00,2012-07-20 17:00,,2012-05-30 16:59,2012-07-20 16:59,CS_MSO,PT_Normal,,,,,K5jnkwHDvEy4TYVDk/GV7g,tjm2mx2cUUyxd/Z8deMfQA,,,N,0,0,,,2012-06-20 11:04,2012-06-20 11:04,admin,admin
1462,146185,5115,22987,5686,0,0,N,N,N,CP_Drtn,TT_FinMile,DT_FixedDrtn,RV_OK,TK_NotStart,GM71,Reciving Fax of Award,,-0.016667,0,0,0,0,0,0,0,0,0,2012-01-20 16:00,,,2012-01-19 16:00,2012-01-19 16:00,,2012-01-21 08:01,2012-01-21 08:01,2012-01-21 08:01,2012-01-21 08:01,2012-01-21 08:01,2012-01-21 08:01,,2012-01-19 16:00,2012-01-19 16:00,CS_MEO,PT_Normal,,,,,zRKxENoc7025VHBnuOiP5Q,QntCRO6hKk2dGYdaC4jC+A,,,N,0,0,,,2012-06-20 11:04,2012-06-20 11:04,admin,admin
1463,146186,5115,22987,5686,0,0,N,N,N,CP_Drtn,TT_Mile,DT_FixedDrtn,RV_OK,TK_NotStart,GM72,Project Fab. Start,,1951.983333,1952,0,0,0,0,0,0,0,0,,,,2013-04-07 15:59,2013-04-07 15:59,,2012-06-13 08:00,2012-06-13 08:00,2012-06-13 08:00,2012-06-13 08:00,2012-06-13 08:00,2012-06-13 08:00,,2013-04-07 15:59,2013-04-07 15:59,,PT_Normal,,,,,XHVoDl5+qEq+TJTVtwYDAA,BLyTuTslCE6HWg/1RLrlRA,,,N,0,0,,,2012-06-20 11:04,2012-06-20 11:04,admin,admin
1464,146187,5115,22987,5686,0,0,N,N,N,CP_Drtn,TT_Mile,DT_FixedDrtn,RV_OK,TK_NotStart,GM74,Ready for Load out ( 02nd Shipment/ Jacket & Piles ),,208,208,0,0,0,0,0,0,0,0,,,,2013-02-25 08:00,2013-02-25 08:00,,2013-01-23 08:00,2013-01-23 08:00,2013-01-23 08:00,2013-01-23 08:00,2013-01-23 08:00,2013-01-23 08:00,,2013-02-25 08:00,2013-02-25 08:00,,PT_Normal,,,,,VsR8CEMeFkSIUWwVOO8Lqw,gFZONbWIK0C+nNXjlIz6uQ,,,N,0,0,,,2012-06-20 11:04,2012-06-20 11:04,admin,admin
1465,146188,5115,22987,5686,0,0,N,N,N,CP_Drtn,TT_Mile,DT_FixedDrtn,RV_OK,TK_NotStart,GM75,Ready for Load out ( 03rd Shipment/ Deck C/W TSF ),,55.983333,56,0,0,0,0,0,0,0,0,,,,2013-04-07 15:59,2013-04-07 15:59,,2013-03-31 08:00,2013-03-31 08:00,2013-03-31 08:00,2013-03-31 08:00,2013-03-31 08:00,2013-03-31 08:00,,2013-04-07 15:59,2013-04-07 15:59,,PT_Normal,,,,,M9xrXU3+tkmiDY8G3656xw,9s2ympvYOEiZvw5ljG+Kxw,,,N,0,0,,,2012-06-20 11:04,2012-06-20 11:04,admin,admin
1466,146189,5115,22987,5686,0,0,N,N,N,CP_Drtn,TT_Mile,DT_FixedDrtn,RV_OK,TK_NotStart,GM73,"Ready for Load out (01st Shipment / Pipeline Spools 18"""" & 8"""")",,1119.983333,1120,0,0,0,0,0,0,0,0,,,,2013-04-07 15:59,2013-04-07 15:59,,2012-10-18 08:00,2012-10-18 08:00,2012-10-18 08:00,2012-10-18 08:00,2012-10-18 08:00,2012-10-18 08:00,,2013-04-07 15:59,2013-04-07 15:59,,PT_Normal,,,,,16GBXA2wPk6PThrxdQ+Xmw,6hkgSxtQukaozXDsVGKVjA,,,N,0,0,,,2012-06-20 11:04,2012-06-20 11:04,admin,admin
1467,146190,5115,23011,794,1,0,N,N,N,CP_Drtn,TT_Task,DT_FixedDrtn,RV_OK,TK_NotStart,ENS73,Receiving Jacket Primary & Secondary Steel IFC DWG`s,,0,0,1104,0,0,0,1104,0,0,0,2011-11-30 08:01,,,2011-11-30 08:01,2012-04-16 08:01,,2011-11-30 08:01,2012-04-16 08:01,2011-11-30 08:01,2012-04-16 08:01,2011-11-30 08:01,2012-04-16 08:01,,2011-11-30 08:01,2012-04-16 08:01,CS_MSO,PT_Normal,,,,,R+HhTSTKRE2js1A13i71Dw,fQn8/D6rEUSlwSy++aYoQA,,,N,0,0,,,2012-06-20 11:04,2012-06-20 11:04,admin,admin
1468,146191,5115,23011,794,0,0,N,N,N,CP_Drtn,TT_FinMile,DT_FixedDrtn,RV_OK,TK_NotStart,ENS74,Receiving Piles IFC DWG`s,,0,720,0,0,0,0,0,0,0,0,2012-01-17 08:01,,,2012-01-17 08:01,2012-01-17 08:01,,2012-01-17 08:01,2012-01-17 08:01,2012-01-17 08:01,2012-01-17 08:01,2012-01-17 08:01,2012-01-17 08:01,,2012-01-17 08:01,2012-01-17 08:01,CS_MEO,PT_Normal,,,,,Cnuh8K5gvEWAjYIA71bbjw,585mTWwaOUekmnE83+A1kg,,,N,0,0,,,2012-06-20 11:04,2012-06-20 11:04,admin,admin
1469,146192,5115,23011,794,1,0,N,N,N,CP_Drtn,TT_Task,DT_FixedDUR2,RV_OK,TK_NotStart,ENS75,Receiving Deck Str. Primary & Secondary IFC DWG`s,,0,224,328,0,0,0,328,0,0,0,2012-02-07 08:01,,,2012-02-07 08:01,2012-03-19 08:01,,2012-02-07 08:01,2012-03-19 08:01,2012-02-07 08:01,2012-03-19 08:01,2012-02-07 08:01,2012-03-19 08:01,,2012-02-07 08:01,2012-03-19 08:01,CS_MSO,PT_Normal,,,,,RGiRovwGYU6eEfksZ6qtEg,vDJwuFiedked97VMopq//w,,,N,0,0,,,2012-06-20 11:04,2012-06-20 11:04,admin,admin
1470,146193,5115,23011,794,0,0,N,N,N,CP_Drtn,TT_FinMile,DT_FixedDrtn,RV_OK,TK_NotStart,ENS71,"Receiving Final Jacket , Boat Land & Piles MTO",,135.983333,135.983333,0,0,0,0,0,0,0,0,,,,2012-02-14 17:00,2012-02-14 17:00,,2012-01-29 08:01,2012-01-29 08:01,2012-01-29 08:01,2012-01-29 08:01,2012-01-29 08:01,2012-01-29 08:01,,2012-02-14 17:00,2012-02-14 17:00,,PT_Normal,,,,,H8XBpHuBwEeIjeFCp42aRA,hfJ8sj6Ai02DimJPwXbdQw,,,N,0,0,,,2012-06-20 11:04,2012-06-20 11:04,admin,admin
1471,146194,5115,23011,794,0,0,N,N,N,CP_Drtn,TT_FinMile,DT_FixedDrtn,RV_OK,TK_NotStart,ENS72,Receiving Final Deck Str. MTO,,135.983333,135.983333,0,0,0,0,0,0,0,0,,,,2012-02-14 17:00,2012-02-14 17:00,,2012-01-29 08:01,2012-01-29 08:01,2012-01-29 08:01,2012-01-29 08:01,2012-01-29 08:01,2012-01-29 08:01,,2012-02-14 17:00,2012-02-14 17:00,,PT_Normal,,,,,GC+0jbRm1kyfg7MkcSa9Uw,0X6GOG/si0W/k3axqY1amw,,,N,0,0,,,2012-06-20 11:04,2012-06-20 11:04,admin,admin
1472,146195,5115,23011,794,1,0,N,N,N,CP_Drtn,TT_Task,DT_FixedDrtn,RV_OK,TK_NotStart,ENS78,Receiving IFC Equipment fixation DWG`s,,0,1559.983333,104,0,0,0,104,0,0,0,2012-04-04 08:01,,,2012-04-04 08:01,2012-04-17 08:01,,2012-04-04 08:01,2012-04-17 08:01,2012-04-04 08:01,2012-04-17 08:01,2012-04-04 08:01,2012-04-17 08:01,,2012-04-04 08:01,2012-04-17 08:01,CS_MSO,PT_Normal,,,,,ie7UiGlqtEqzNzOhjAhV2g,IwC8dusvkkeoGNbz2wydyg,,,N,0,0,,,2012-06-20 11:04,2012-06-20 11:04,admin,admin
1473,146196,5115,23011,794,1,0,N,N,N,CP_Drtn,TT_Task,DT_FixedDUR2,RV_OK,TK_NotStart,ENS76,Receiving Piping Supports IFC DWG's,,0,3078.983333,160,0,0,0,160,0,0,0,2012-02-28 08:01,,,2012-02-28 08:01,2012-03-19 08:01,,2012-02-28 08:01,2012-03-19 08:01,2012-02-28 08:01,2012-03-19 08:01,2012-02-28 08:01,2012-03-19 08:01,,2012-02-28 08:01,2012-03-19 08:01,CS_MSO,PT_Normal,,,,,wBZr9xYgFEifSZuHPt1ERw,fwqWJuI73UKeEIb3GJFIaA,,,N,0,0,,,2012-06-20 11:04,2012-06-20 11:04,admin,admin
1474,146197,5115,23011,794,1,0,N,N,N,CP_Drtn,TT_Task,DT_FixedDUR2,RV_OK,TK_NotStart,ENS77,Receiving Cable tarys Support IFC DWG's,,0,3022.983333,104,0,0,0,104,0,0,0,2012-03-13 08:01,,,2012-03-13 08:01,2012-03-26 08:01,,2012-03-13 08:01,2012-03-26 08:01,2012-03-13 08:01,2012-03-26 08:01,2012-03-13 08:01,2012-03-26 08:01,,2012-03-13 08:01,2012-03-26 08:01,CS_MSO,PT_Normal,,,,,yZ+kVr84oUa5Av/FdcNyGw,uubwd56Wz0KTSuLtYlidjg,,,N,0,0,,,2012-06-20 11:04,2012-06-20 11:04,admin,admin
1475,146198,5115,23011,794,1,0,N,N,N,CP_Drtn,TT_Task,DT_FixedDrtn,RV_OK,TK_NotStart,ENS79,"Receiving P/L 8"""" & 18"""" IFC DWG's",,0,2736,160,0,0,0,160,0,0,0,2012-04-10 16:00,,,2012-04-10 16:00,2012-04-30 16:00,,2012-04-10 16:00,2012-04-30 16:00,2012-04-10 16:00,2012-04-30 16:00,2012-04-10 16:00,2012-04-30 16:00,,2012-04-10 16:00,2012-04-30 16:00,CS_MSO,PT_Normal,,,,,R8RAvaLhr0WUlCC9w7Hb4A,oIVfzDIEhEGkQBAOSFzBdQ,,,N,0,0,,,2012-06-20 11:04,2012-06-20 11:04,admin,admin
1476,146199,5115,23012,794,1,0,N,N,N,CP_Drtn,TT_Task,DT_FixedDrtn,RV_OK,TK_NotStart,ENT73,Receiving Piping ISO`s IFC DWG's,,0,1047.983333,112,0,0,0,112,0,0,0,2012-02-27 08:01,,,2012-02-27 08:01,2012-03-12 08:01,,2012-02-27 08:01,2012-03-12 08:01,2012-02-27 08:01,2012-03-12 08:01,2012-02-27 08:01,2012-03-12 08:01,,2012-02-27 08:01,2012-03-12 08:01,CS_MSO,PT_Normal,,,,,rrVb+coOJEecTvnE0FhPKQ,EbAV7O3+0UWzxWiIdkWuwA,,,N,0,0,,,2012-06-20 11:04,2012-06-20 11:04,admin,admin
1477,146200,5115,23012,794,0,0,N,N,N,CP_Drtn,TT_FinMile,DT_FixedDrtn,RV_OK,TK_NotStart,ENT71,Issue Approved P&ID's / Equipment List IFC DWG's,,0,3584,0,0,0,0,0,0,0,0,2012-01-15 16:00,,,2012-01-15 16:00,2012-01-15 16:00,,2012-01-15 16:00,2012-01-15 16:00,2012-01-15 16:00,2012-01-15 16:00,2012-01-15 16:00,2012-01-15 16:00,,2012-01-15 16:00,2012-01-15 16:00,CS_MEO,PT_Normal,,,,,dOnyAI7htU6mJgPxWilQKQ,aW4hUSQwQkyC6xUGkTqBNw,,,N,0,0,,,2012-06-20 11:04,2012-06-20 11:04,admin,admin
1478,146201,5115,23012,794,0,0,N,N,N,CP_Drtn,TT_FinMile,DT_FixedDrtn,RV_OK,TK_NotStart,ENT72,Issue plat plans IFC DWG's,,0,3408,0,0,0,0,0,0,0,0,2012-02-06 16:00,,,2012-02-06 16:00,2012-02-06 16:00,,2012-02-06 16:00,2012-02-06 16:00,2012-02-06 16:00,2012-02-06 16:00,2012-02-06 16:00,2012-02-06 16:00,,2012-02-06 16:00,2012-02-06 16:00,CS_MEO,PT_Normal,,,,,eh8xFq3RGEq9qnTDBUDThw,BK+nLP810UCbJMC0LPk30g,,,N,0,0,,,2012-06-20 11:04,2012-06-20 11:04,admin,admin
1479,146202,5115,23012,5686,0,0,N,N,N,CP_Drtn,TT_FinMile,DT_FixedDrtn,RV_OK,TK_NotStart,ENT74,Issue Hydrotest maps & loops IFC DWG's,,0,2648,0,0,0,0,0,0,0,0,2012-02-28 16:00,,,2012-02-28 16:00,2012-02-28 16:00,,2012-02-28 16:00,2012-02-28 16:00,2012-02-28 16:00,2012-02-28 16:00,2012-02-28 16:00,2012-02-28 16:00,,2012-02-28 16:00,2012-02-28 16:00,CS_MEO,PT_Normal,,,,,zvQluQwIqUKpvDAXbklCIA,fHwgfAMtLECZ5IJXBmoKbw,,,N,0,0,,,2012-06-20 11:04,2012-06-20 11:04,admin,admin
1480,146203,5115,23013,794,1,0,N,N,N,CP_Drtn,TT_Task,DT_FixedDUR2,RV_OK,TK_NotStart,ENE71,Receiving E&I IFC DWG`s,,0,2279.983333,776,0,0,0,776,0,0,0,2012-01-23 08:01,,,2012-01-23 08:01,2012-04-29 08:01,,2012-01-23 08:01,2012-04-29 08:01,2012-01-23 08:01,2012-04-29 08:01,2012-01-23 08:01,2012-04-29 08:01,,2012-01-23 08:01,2012-04-29 08:01,CS_MSO,PT_Normal,,,,,PJKBbLPxVEyLekZ/AhZIDw,PBmCenI7YEKLp6iD84Cr7Q,,,N,0,0,,,2012-06-20 11:04,2012-06-20 11:04,admin,admin
1481,146204,5115,22989,5686,1,0,N,N,N,CP_Drtn,TT_Task,DT_FixedDUR2,RV_OK,TK_NotStart,PF71,Pre-Fabrication of Steel Structure ( Jacket & Piles),,208,0,960,0,0,0,960,0,0,0,,,,2012-07-14 08:00,2012-12-10 16:00,,2012-06-13 08:00,2012-11-08 16:00,2012-06-13 08:00,2012-11-08 16:00,2012-06-13 08:00,2012-11-08 16:00,,2012-07-14 08:00,2012-12-10 16:00,,PT_Normal,,,,,akErFd6EeEep2tp1CLulXQ,BXGh6gKxm0iB+B+N2Cm2ag,,,N,0,0,,,2012-06-20 11:04,2012-06-20 11:04,admin,admin
1482,146205,5115,23005,794,1,0,N,N,N,CP_Drtn,TT_Task,DT_FixedDUR2,RV_OK,TK_NotStart,PRT141,Piping Bulk material 1st batch,,-0.016667,536,240,0,0,0,240,0,0,0,2012-05-07 17:00,,,2012-05-07 16:59,2012-06-06 16:59,,2012-05-08 08:00,2012-06-06 17:00,2012-05-08 08:00,2012-06-06 17:00,2012-05-08 08:00,2012-06-06 17:00,,2012-05-07 16:59,2012-06-06 16:59,CS_MSO,PT_Normal,,,,,GX5zkf5uVke28HzCxa7U9Q,mlVZd8jlMk6fm6lMahemSA,,,N,0,0,,,2012-06-20 11:04,2012-06-20 11:04,admin,admin
1483,146206,5115,23005,794,1,0,N,N,N,CP_Drtn,TT_Task,DT_FixedDUR2,RV_OK,TK_NotStart,PRT142,Piping Bulk material 2nd batch,,-0.016667,855,240,0,0,0,240,0,0,0,2012-06-10 17:00,,,2012-06-10 16:59,2012-07-10 16:59,,2012-06-11 08:00,2012-07-10 17:00,2012-06-11 08:00,2012-07-10 17:00,2012-06-11 08:00,2012-07-10 17:00,,2012-06-10 16:59,2012-07-10 16:59,CS_MSO,PT_Normal,,,,,ibBjzbBV0Um7cqDtreB7fw,XSjOeWLmc0Suy1GGlTLASQ,,,N,0,0,,,2012-06-20 11:04,2012-06-20 11:04,admin,admin
1484,146207,5115,23005,794,1,0,N,N,N,CP_Drtn,TT_Task,DT_FixedDUR2,RV_OK,TK_NotStart,PRT73,Piping Valves Bulk material 1st batch,,-0.016667,999,112,0,0,0,112,0,0,0,2012-06-23 17:00,,,2012-06-23 16:59,2012-07-07 16:59,,2012-06-24 08:00,2012-07-07 17:00,2012-06-24 08:00,2012-07-07 17:00,2012-06-24 08:00,2012-07-07 17:00,,2012-06-23 16:59,2012-07-07 16:59,CS_MSO,PT_Normal,,,,,bvU6DElQNUip+5gCRGi1WQ,mQTrdmlAckeihDmyjty0yw,,,N,0,0,,,2012-06-20 11:04,2012-06-20 11:04,admin,admin
1485,146208,5115,23005,794,1,0,N,N,N,CP_Drtn,TT_Task,DT_FixedDUR2,RV_OK,TK_NotStart,PRT74,Piping valves Bulk material 2nd batch,,-0.016667,767,112,0,0,0,112,0,0,0,2012-07-22 17:00,,,2012-07-22 16:59,2012-08-05 16:59,,2012-07-23 08:00,2012-08-05 17:00,2012-07-23 08:00,2012-08-05 17:00,2012-07-23 08:00,2012-08-05 17:00,,2012-07-22 16:59,2012-08-05 16:59,CS_MSO,PT_Normal,,,,,nouIsHIsJ0eCDbuNl1GfLQ,XYLgLhVz1EisgV8ctlneGw,,,N,0,0,,,2012-06-20 11:04,2012-06-20 11:04,admin,admin
1486,146209,5115,23005,794,1,0,N,N,N,CP_Drtn,TT_Task,DT_FixedDUR2,RV_OK,TK_NotStart,PRT75,Flanges,,-0.016667,8,360,0,0,0,360,0,0,0,2012-07-13 17:00,,,2012-07-13 16:59,2012-08-27 16:59,,2012-07-14 08:00,2012-08-27 17:00,2012-07-14 08:00,2012-08-27 17:00,2012-07-14 08:00,2012-08-27 17:00,,2012-07-13 16:59,2012-08-27 16:59,CS_MSO,PT_Normal,,,,,39TKxQDvPUS1DKzbiyQEOQ,ynw/2kVsJUCQTiDjWuiUKg,,,N,0,0,,,2012-06-20 11:04,2012-06-20 11:04,admin,admin
1487,146210,5115,23005,794,1,0,N,N,N,CP_Drtn,TT_Task,DT_FixedDUR2,RV_OK,TK_NotStart,PRT76,Pressure Safety Valve,,-0.016667,1519,352,0,0,0,352,0,0,0,2012-06-04 17:00,,,2012-06-04 16:59,2012-07-18 16:59,,2012-06-05 08:00,2012-07-18 17:00,2012-06-05 08:00,2012-07-18 17:00,2012-06-05 08:00,2012-07-18 17:00,,2012-06-04 16:59,2012-07-18 16:59,CS_MSO,PT_Normal,,,,,kSY2SnObn02UAoMHLKmxsg,FmcfYmS0CkqRp6Gvxanm2A,,,N,0,0,,,2012-06-20 11:04,2012-06-20 11:04,admin,admin
1488,146211,5115,23005,794,1,0,N,N,N,CP_Drtn,TT_Task,DT_FixedDUR2,RV_OK,TK_NotStart,PRT77,Pressure regulator Valve,,-0.016667,1231,240,0,0,0,240,0,0,0,2012-07-24 17:00,,,2012-07-24 16:59,2012-08-23 16:59,,2012-07-25 08:00,2012-08-23 17:00,2012-07-25 08:00,2012-08-23 17:00,2012-07-25 08:00,2012-08-23 17:00,,2012-07-24 16:59,2012-08-23 16:59,CS_MSO,PT_Normal,,,,,Aj9ZRi3DYUyG6v304KPbww,MUMBakw88UCMBwfosGhvtA,,,N,0,0,,,2012-06-20 11:05,2012-06-20 11:05,admin,admin
1489,146212,5115,23005,794,1,0,N,N,N,CP_Drtn,TT_Task,DT_FixedDUR2,RV_OK,TK_NotStart,PRT78,Shutdown Valve,,-0.016667,1135,248,0,0,0,248,0,0,0,2012-08-04 17:00,,,2012-08-04 16:59,2012-09-04 16:59,,2012-08-05 08:00,2012-09-04 17:00,2012-08-05 08:00,2012-09-04 17:00,2012-08-05 08:00,2012-09-04 17:00,,2012-08-04 16:59,2012-09-04 16:59,CS_MSO,PT_Normal,,,,,fMjMPbMcuEGXlPP+FXmFGQ,3HVeZrPw+kua3HhPYoeooQ,,,N,0,0,,,2012-06-20 11:05,2012-06-20 11:05,admin,admin
1490,146213,5115,23002,794,1,0,N,N,N,CP_Drtn,TT_Task,DT_FixedDUR2,RV_OK,TK_NotStart,PRT79,Chemical Injection PKG.,,-0.016667,1264,360,0,0,0,360,0,0,0,2012-05-08 17:00,,,2012-05-08 16:59,2012-06-22 16:59,,2012-05-09 08:00,2012-06-22 17:00,2012-05-09 08:00,2012-06-22 17:00,2012-05-09 08:00,2012-06-22 17:00,,2012-05-08 16:59,2012-06-22 16:59,CS_MSO,PT_Normal,,,,,SblxYn2fLkWM2n/Fqg924Q,atgCRGby9EyY4hjcV3KVMw,,,N,0,0,,,2012-06-20 11:05,2012-06-20 11:05,admin,admin
1491,146214,5115,23002,794,1,0,N,N,N,CP_Drtn,TT_Task,DT_FixedDUR2,RV_OK,TK_NotStart,PRT80,Launcher recivier,,-0.016667,960,360,0,0,0,360,0,0,0,2012-06-15 17:00,,,2012-06-15 16:59,2012-07-30 16:59,,2012-06-16 08:00,2012-07-30 17:00,2012-06-16 08:00,2012-07-30 17:00,2012-06-16 08:00,2012-07-30 17:00,,2012-06-15 16:59,2012-07-30 16:59,CS_MSO,PT_Normal,,,,,GnpnSnQavUiDQsuKzvwHdw,EKOmDBP6cEq6EOVl5NB3WA,,,N,0,0,,,2012-06-20 11:05,2012-06-20 11:05,admin,admin
1492,146215,5115,23002,794,1,0,N,N,N,CP_Drtn,TT_Task,DT_FixedDUR2,RV_OK,TK_NotStart,PRT151,Vent KOD,,-0.016667,864,360,0,0,0,360,0,0,0,2012-06-27 17:00,,,2012-06-27 16:59,2012-08-11 16:59,,2012-06-28 08:00,2012-08-11 17:00,2012-06-28 08:00,2012-08-11 17:00,2012-06-28 08:00,2012-08-11 17:00,,2012-06-27 16:59,2012-08-11 16:59,CS_MSO,PT_Normal,,,,,VyJjC37wEESo8GKd5PitvQ,rf+Er5qWCU2Vl8wE317jGQ,,,N,0,0,,,2012-06-20 11:05,2012-06-20 11:05,admin,admin
1493,146216,5115,23002,794,1,0,N,N,N,CP_Drtn,TT_Task,DT_FixedDUR2,RV_OK,TK_NotStart,PRT152,Open Drain Tank,,-0.016667,624,360,0,0,0,360,0,0,0,2012-06-27 17:00,,,2012-06-27 16:59,2012-08-11 16:59,,2012-06-28 08:00,2012-08-11 17:00,2012-06-28 08:00,2012-08-11 17:00,2012-06-28 08:00,2012-08-11 17:00,,2012-06-27 16:59,2012-08-11 16:59,CS_MSO,PT_Normal,,,,,AUifRUGyFEW+XrI0kix1hg,QEatGDsWyEC05CbcxV4PSA,,,N,0,0,,,2012-06-20 11:05,2012-06-20 11:05,admin,admin
1494,146217,5115,23003,794,1,0,N,N,N,CP_Drtn,TT_Task,DT_FixedDUR2,RV_OK,TK_NotStart,PRS73,Delivery of Structure Material (F.O.B - 13 Wks.) - (Gupco Responsability),,0,0,728,0,0,0,728,0,0,0,,,,2012-02-15 08:00,2012-05-15 17:00,,2012-02-15 08:00,2012-05-15 17:00,2012-02-15 08:00,2012-05-15 17:00,2012-02-15 08:00,2012-05-15 17:00,,2012-02-15 08:00,2012-05-15 17:00,,PT_Normal,,,,,L0HAmU8H3km7Cti5Y09tRg,ufROFkTcoEuCgCWoyMhxDg,,,Y,0,0,,,2012-06-20 11:05,2012-06-20 11:05,admin,admin
1495,146218,5115,23003,794,1,0,N,N,N,CP_Drtn,TT_Task,DT_FixedDUR2,RV_OK,TK_NotStart,PRS75,Material check with IFC DWG's to Prepare balance material,,1566.983333,0,56,0,0,0,56,0,0,0,,,,2012-10-28 16:00,2012-11-04 16:00,,2012-04-16 08:01,2012-04-23 08:01,2012-04-16 08:01,2012-04-23 08:01,2012-04-16 08:01,2012-04-23 08:01,,2012-10-28 16:00,2012-11-04 16:00,,PT_Normal,,,,,2igngee7xEOLAPUVIt22IQ,WHf9ahQtqU2p9l32LH4nFg,,,N,0,0,,,2012-06-20 11:05,2012-06-20 11:05,admin,admin
1496,146219,5115,23003,794,1,0,N,N,N,CP_Drtn,TT_Task,DT_FixedDUR2,RV_OK,TK_NotStart,PRS76,Delivery of balance material,,1566.983333,1566.983333,1232,0,0,0,1232,0,0,0,,,,2012-11-04 16:00,2013-04-07 16:00,,2012-04-23 08:01,2012-09-24 08:01,2012-04-23 08:01,2012-09-24 08:01,2012-04-23 08:01,2012-09-24 08:01,,2012-11-04 16:00,2013-04-07 16:00,,PT_Normal,,,,,ppMkkffJzUCxgCYbUblTCw,qqmATIO3T0mle0HolK/t5g,,,N,0,0,,,2012-06-20 11:05,2012-06-20 11:05,admin,admin
1497,146220,5115,23003,794,0,0,N,N,N,CP_Drtn,TT_Mile,DT_FixedDrtn,RV_OK,TK_NotStart,PRS71,Issue Structural Material P.O's ( Gupco Responsability),,0,64,0,0,0,0,0,0,0,0,2012-02-07 08:00,,,2012-02-07 08:00,2012-02-07 08:00,,2012-02-07 08:00,2012-02-07 08:00,2012-02-07 08:00,2012-02-07 08:00,2012-02-07 08:00,2012-02-07 08:00,,2012-02-07 08:00,2012-02-07 08:00,CS_MSO,PT_Normal,,,,,bDI3mvMM0EWaPVQ7c/JsWA,pHgYmay3DEa6F1CjhdcYlQ,,,N,0,0,,,2012-06-20 11:05,2012-06-20 11:05,admin,admin
1498,146221,5115,23003,794,0,0,N,N,N,CP_Drtn,TT_Mile,DT_FixedDrtn,RV_OK,TK_NotStart,PRS72,Issue LC ( Gupco Responsability),,0,0,0,0,0,0,0,0,0,0,2012-02-15 08:00,,,2012-02-15 08:00,2012-02-15 08:00,,2012-02-15 08:00,2012-02-15 08:00,2012-02-15 08:00,2012-02-15 08:00,2012-02-15 08:00,2012-02-15 08:00,,2012-02-15 08:00,2012-02-15 08:00,CS_MSO,PT_Normal,,,,,ZChmCwb++ESK97GHNhUGvA,veFibYaEtEavYsz0ENZ8Xw,,,Y,0,0,,,2012-06-20 11:05,2012-06-20 11:05,admin,admin
1499,146222,5115,23003,794,1,0,N,N,N,CP_Drtn,TT_Task,DT_FixedDUR2,RV_OK,TK_NotStart,PRS74,Delivery of Structure Material at Site (4 Wks.),,0,0,224,0,0,0,224,0,0,0,,,,2012-05-16 08:00,2012-06-12 17:00,,2012-05-16 08:00,2012-06-12 17:00,2012-05-16 08:00,2012-06-12 17:00,2012-05-16 08:00,2012-06-12 17:00,,2012-05-16 08:00,2012-06-12 17:00,,PT_Normal,,,,,3GVzGrGt9EWIk+n67k1Q/Q,nRJYaZzK+UG2EPxNOD2G8g,,,Y,0,0,,,2012-06-20 11:05,2012-06-20 11:05,admin,admin
1500,146223,5115,23004,794,1,0,N,N,N,CP_Drtn,TT_Task,DT_FixedDrtn,RV_OK,TK_NotStart,PRP71,"Pipeline 18"""" & Fittings",,0,0,408,0,0,0,408,0,0,0,2012-05-31 08:00,,,2012-05-31 08:00,2012-07-20 17:00,,2012-05-31 08:00,2012-07-20 17:00,2012-05-31 08:00,2012-07-20 17:00,2012-05-31 08:00,2012-07-20 17:00,,2012-05-31 08:00,2012-07-20 17:00,CS_MSO,PT_Normal,,,,,VDPpaAxcaUCgy4WJBxlxHA,0gQPSnx6fE6L7wIm15puCg,,,N,0,0,,,2012-06-20 11:05,2012-06-20 11:05,admin,admin
1501,146224,5115,23004,794,1,0,N,N,N,CP_Drtn,TT_Task,DT_FixedDrtn,RV_OK,TK_NotStart,PRP142,"Pipeline 8"""" & Fittings",,-0.016667,351,408,0,0,0,408,0,0,0,2012-05-30 17:00,,,2012-05-30 16:59,2012-07-20 16:59,,2012-05-31 08:00,2012-07-20 17:00,2012-05-31 08:00,2012-07-20 17:00,2012-05-31 08:00,2012-07-20 17:00,,2012-05-30 16:59,2012-07-20 16:59,CS_MSO,PT_Normal,,,,,mbKS2jxef0mqMHEJH8EbDw,AxWyZ9p3n0Oi1nGfbffvUg,,,N,0,0,,,2012-06-20 11:05,2012-06-20 11:05,admin,admin
1502,146225,5115,23027,794,1,0,N,N,N,CP_Drtn,TT_Task,DT_FixedDUR2,RV_OK,TK_NotStart,PRE77,Radar system,,-0.016667,904,240,0,0,0,240,0,0,0,2012-06-19 17:00,,,2012-06-19 16:59,2012-07-19 16:59,,2012-06-20 08:00,2012-07-19 17:00,2012-06-20 08:00,2012-07-19 17:00,2012-06-20 08:00,2012-07-19 17:00,,2012-06-19 16:59,2012-07-19 16:59,CS_MSO,PT_Normal,,,,,0P+jiSLvxk++hltjnNFjcw,ZwOgBmKoj0abTWYrf+cpXQ,,,N,0,0,,,2012-06-20 11:05,2012-06-20 11:05,admin,admin
1503,146226,5115,23027,794,1,0,N,N,N,CP_Drtn,TT_Task,DT_FixedDUR2,RV_OK,TK_NotStart,PRE78,Navegation Aids,,-0.016667,1384,360,0,0,0,360,0,0,0,2012-04-05 17:00,,,2012-04-05 16:59,2012-05-20 16:59,,2012-04-06 08:00,2012-05-20 17:00,2012-04-06 08:00,2012-05-20 17:00,2012-04-06 08:00,2012-05-20 17:00,,2012-04-05 16:59,2012-05-20 16:59,CS_MSO,PT_Normal,,,,,0fcM9aZ4VEOJWLQiX0ohVg,AdPCWeKs9Eu/XKLAjtX/xg,,,N,0,0,,,2012-06-20 11:05,2012-06-20 11:05,admin,admin
1504,146227,5115,23028,794,1,0,N,N,N,CP_Drtn,TT_Task,DT_FixedDUR2,RV_OK,TK_NotStart,PRE141,Electrical Bulks,,-0.016667,512,360,0,0,0,360,0,0,0,2012-07-23 17:00,,,2012-07-23 16:59,2012-09-06 16:59,,2012-07-24 08:00,2012-09-06 17:00,2012-07-24 08:00,2012-09-06 17:00,2012-07-24 08:00,2012-09-06 17:00,,2012-07-23 16:59,2012-09-06 16:59,CS_MSO,PT_Normal,,,,,SRRkw6F2r0yS80qIe2qtQA,WXLNpk9sVEuqCcpSKWeHsQ,,,N,0,0,,,2012-06-20 11:05,2012-06-20 11:05,admin,admin
1505,146228,5115,23028,794,1,0,N,N,N,CP_Drtn,TT_Task,DT_FixedDUR2,RV_OK,TK_NotStart,PRE142,Cathodic Protection,,-0.016667,1000,360,0,0,0,360,0,0,0,2012-05-23 17:00,,,2012-05-23 16:59,2012-07-07 16:59,,2012-05-24 08:00,2012-07-07 17:00,2012-05-24 08:00,2012-07-07 17:00,2012-05-24 08:00,2012-07-07 17:00,,2012-05-23 16:59,2012-07-07 16:59,CS_MSO,PT_Normal,,,,,bJ9/VqEyakyKQftr+q1HRg,rBAMXE1Xckm5NRjyKElk1A,,,N,0,0,,,2012-06-20 11:05,2012-06-20 11:05,admin,admin
1506,146229,5115,23028,794,1,0,N,N,N,CP_Drtn,TT_Task,DT_FixedDUR2,RV_OK,TK_NotStart,PRE143,Solar Power,,-0.016667,912,360,0,0,0,360,0,0,0,2012-06-03 17:00,,,2012-06-03 16:59,2012-07-18 16:59,,2012-06-04 08:00,2012-07-18 17:00,2012-06-04 08:00,2012-07-18 17:00,2012-06-04 08:00,2012-07-18 17:00,,2012-06-03 16:59,2012-07-18 16:59,CS_MSO,PT_Normal,,,,,Jp5bnJyrtEWZ6oE72EBRgQ,224lD4coJkG9lmldOcMgGw,,,N,0,0,,,2012-06-20 11:05,2012-06-20 11:05,admin,admin
1507,146230,5115,23025,794,1,0,N,N,N,CP_Drtn,TT_Task,DT_FixedDUR2,RV_OK,TK_NotStart,PRE74,F&G Detector,,-0.016667,648,360,0,0,0,360,0,0,0,2012-07-06 17:00,,,2012-07-06 16:59,2012-08-20 16:59,,2012-07-07 08:00,2012-08-20 17:00,2012-07-07 08:00,2012-08-20 17:00,2012-07-07 08:00,2012-08-20 17:00,,2012-07-06 16:59,2012-08-20 16:59,CS_MSO,PT_Normal,,,,,Nt0/CIpZaEeXiWt384f8gQ,GNiZoWepJkyQLU1cno9RoA,,,N,0,0,,,2012-06-20 11:05,2012-06-20 11:05,admin,admin
1508,146231,5115,23025,794,1,0,N,N,N,CP_Drtn,TT_Task,DT_FixedDUR2,RV_OK,TK_NotStart,PRE75,Fire fighting system,,-0.016667,720,360,0,0,0,360,0,0,0,2012-06-27 17:00,,,2012-06-27 16:59,2012-08-11 16:59,,2012-06-28 08:00,2012-08-11 17:00,2012-06-28 08:00,2012-08-11 17:00,2012-06-28 08:00,2012-08-11 17:00,,2012-06-27 16:59,2012-08-11 16:59,CS_MSO,PT_Normal,,,,,/NDuaUcQ9EiVX/zAeZHu4g,A2Ms5fr0LkmjeEO9wddbSw,,,N,0,0,,,2012-06-20 11:05,2012-06-20 11:05,admin,admin
1509,146232,5115,23025,794,1,0,N,N,N,CP_Drtn,TT_Task,DT_FixedDUR2,RV_OK,TK_NotStart,PRE76,Life Saving Equipment,,-0.016667,664,360,0,0,0,360,0,0,0,2012-07-04 17:00,,,2012-07-04 16:59,2012-08-18 16:59,,2012-07-05 08:00,2012-08-18 17:00,2012-07-05 08:00,2012-08-18 17:00,2012-07-05 08:00,2012-08-18 17:00,,2012-07-04 16:59,2012-08-18 16:59,CS_MSO,PT_Normal,,,,,95GNxC8S1EuM521FD5YYfQ,ldIBOpgah0a/lR8E0LDWiA,,,N,0,0,,,2012-06-20 11:05,2012-06-20 11:05,admin,admin
1510,146233,5115,23026,794,1,0,N,N,N,CP_Drtn,TT_Task,DT_FixedDUR2,RV_OK,TK_NotStart,PRE79,Instrument Electical Bulk,,-0.016667,624,240,0,0,0,240,0,0,0,2012-07-24 17:00,,,2012-07-24 16:59,2012-08-23 16:59,,2012-07-25 08:00,2012-08-23 17:00,2012-07-25 08:00,2012-08-23 17:00,2012-07-25 08:00,2012-08-23 17:00,,2012-07-24 16:59,2012-08-23 16:59,CS_MSO,PT_Normal,,,,,abEFJl6dckCcxYo+c3cAmA,ZOlQpD0j6k2Oje25cdeLIw,,,N,0,0,,,2012-06-20 11:05,2012-06-20 11:05,admin,admin
1511,146234,5115,23026,794,1,0,N,N,N,CP_Drtn,TT_Task,DT_FixedDUR2,RV_OK,TK_NotStart,PRE80,Instrument Mechanical Bulk,,-0.016667,640,280,0,0,0,280,0,0,0,2012-07-17 17:00,,,2012-07-17 16:59,2012-08-21 16:59,,2012-07-18 08:00,2012-08-21 17:00,2012-07-18 08:00,2012-08-21 17:00,2012-07-18 08:00,2012-08-21 17:00,,2012-07-17 16:59,2012-08-21 16:59,CS_MSO,PT_Normal,,,,,zXqDofa+xU+lK02IWozQEA,CONbT0M6vUqQSnyT17w0og,,,N,0,0,,,2012-06-20 11:05,2012-06-20 11:05,admin,admin
1512,146235,5115,23026,794,1,0,N,N,N,CP_Drtn,TT_Task,DT_FixedDUR2,RV_OK,TK_NotStart,PRE151,Field Instrument,,-0.016667,760,360,0,0,0,360,0,0,0,2012-06-22 17:00,,,2012-06-22 16:59,2012-08-06 16:59,,2012-06-23 08:00,2012-08-06 17:00,2012-06-23 08:00,2012-08-06 17:00,2012-06-23 08:00,2012-08-06 17:00,,2012-06-22 16:59,2012-08-06 16:59,CS_MSO,PT_Normal,,,,,e9BuqpsviEq+NiWySlwjcg,w5X6gbh04UW3W5Wq+rSQBg,,,N,0,0,,,2012-06-20 11:05,2012-06-20 11:05,admin,admin
1513,146236,5115,23026,794,1,0,N,N,N,CP_Drtn,TT_Task,DT_FixedDUR2,RV_OK,TK_NotStart,PRE152,multi phase flow meter,,-0.016667,1095,456,0,0,0,456,0,0,0,2012-07-17 17:00,,,2012-07-17 16:59,2012-09-12 16:59,,2012-07-18 08:00,2012-09-12 17:00,2012-07-18 08:00,2012-09-12 17:00,2012-07-18 08:00,2012-09-12 17:00,,2012-07-17 16:59,2012-09-12 16:59,CS_MSO,PT_Normal,,,,,WKMCEtKd70KBQD1pj1HLCQ,uuNDwlD4PUKH8xd4UATKSA,,,N,0,0,,,2012-06-20 11:05,2012-06-20 11:05,admin,admin
1514,146237,5115,23026,794,1,0,N,N,N,CP_Drtn,TT_Task,DT_FixedDUR2,RV_OK,TK_NotStart,PRE153,Safe Guard system,,-0.016667,1063,240,0,0,0,240,0,0,0,2012-08-17 17:00,,,2012-08-17 16:59,2012-09-16 16:59,,2012-08-18 08:00,2012-09-16 17:00,2012-08-18 08:00,2012-09-16 17:00,2012-08-18 08:00,2012-09-16 17:00,,2012-08-17 16:59,2012-09-16 16:59,CS_MSO,PT_Normal,,,,,rmjQFDVh2U+MA7M7eeeBzQ,itaIeWskBUuoh6CM3axILA,,,N,0,0,,,2012-06-20 11:05,2012-06-20 11:05,admin,admin
1515,146238,5115,23018,5686,1,0,N,N,N,CP_Drtn,TT_Task,DT_FixedDUR2,RV_OK,TK_NotStart,JK71,"Jacket , Boat Landing Fabrication & Painting",,208,0,1400,0,0,0,1400,0,0,0,,,,2012-07-22 08:00,2013-02-24 16:00,,2012-06-21 08:00,2013-01-22 16:00,2012-06-21 08:00,2013-01-22 16:00,2012-06-21 08:00,2013-01-22 16:00,,2012-07-22 08:00,2013-02-24 16:00,,PT_Normal,,,,,ybf8RhL8vk6bGEnWcm1+sw,zGKHlJO9h0ufFBInYTxRrA,,,N,0,0,,,2012-06-20 11:05,2012-06-20 11:05,admin,admin
1516,146239,5115,23018,5686,1,0,N,N,N,CP_Drtn,TT_Task,DT_FixedDUR2,RV_OK,TK_NotStart,JK72,Piles Fabrication & Marking,,592,592,1000,0,0,0,1000,0,0,0,,,,2012-11-08 08:00,2013-04-07 16:00,,2012-08-06 08:00,2013-01-08 16:00,2012-08-06 08:00,2013-01-08 16:00,2012-08-06 08:00,2013-01-08 16:00,,2012-11-08 08:00,2013-04-07 16:00,,PT_Normal,,,,,7te/y1g2bkyQmRjIr1NZXg,8yP1p3vGb0C5fjxlQvUcfw,,,N,0,0,,,2012-06-20 11:05,2012-06-20 11:05,admin,admin
1517,146240,5115,23029,5686,1,0,N,N,N,CP_Drtn,TT_Task,DT_FixedDUR2,RV_OK,TK_NotStart,DS081,Fabrication and Painting of Below Production Deck/Legs,,0,0,840,0,0,0,840,0,0,0,,,,2012-06-13 08:00,2012-10-18 16:00,,2012-06-13 08:00,2012-10-18 16:00,2012-06-13 08:00,2012-10-18 16:00,2012-06-13 08:00,2012-10-18 16:00,,2012-06-13 08:00,2012-10-18 16:00,,PT_Normal,,,,,Sq1yJU0B9kCu1KsjcrYcVw,h/MVry+KeEKwqKSfSZZSbA,,,Y,0,0,,,2012-06-20 11:05,2012-06-20 11:05,admin,admin
1518,146241,5115,23029,5686,1,0,N,N,N,CP_Drtn,TT_Task,DT_FixedDUR2,RV_OK,TK_NotStart,DS082,Fabrication and Painting of Production Deck,,0,0,960,0,0,0,960,0,0,0,,,,2012-06-13 08:00,2012-11-08 16:00,,2012-06-13 08:00,2012-11-08 16:00,2012-06-13 08:00,2012-11-08 16:00,2012-06-13 08:00,2012-11-08 16:00,,2012-06-13 08:00,2012-11-08 16:00,,PT_Normal,,,,,TjrWfO866U+E83P+ToU7uA,PtBKaXvQuUSuBlQPpQvcgw,,,Y,0,0,,,2012-06-20 11:05,2012-06-20 11:05,admin,admin
1519,146242,5115,23029,5686,1,0,N,N,N,CP_Drtn,TT_Task,DT_FixedDUR2,RV_OK,TK_NotStart,DS083,Fabrication and Paint of Heli-Deck ( & Lifting if Required),,400,0,960,0,0,0,960,0,0,0,,,,2012-10-29 08:00,2013-03-21 16:00,,2012-08-27 08:00,2013-01-20 16:00,2012-08-27 08:00,2013-01-20 16:00,2012-08-27 08:00,2013-01-20 16:00,,2012-10-29 08:00,2013-03-21 16:00,,PT_Normal,,,,,8kcllV3bHEGZQYdHSzzn2Q,u+lYOixuZEmCroS3jLPeEw,,,N,0,0,,,2012-06-20 11:05,2012-06-20 11:05,admin,admin
1520,146243,5115,23029,5686,1,0,N,N,N,CP_Drtn,TT_Task,DT_FixedDUR2,RV_OK,TK_NotStart,DS084,Lifting Below Production Deck on High Cups,,24,0,40,0,0,0,40,0,0,0,,,,2012-10-23 08:00,2012-10-31 16:00,,2012-10-20 08:00,2012-10-24 16:00,2012-10-20 08:00,2012-10-24 16:00,2012-10-20 08:00,2012-10-24 16:00,,2012-10-23 08:00,2012-10-31 16:00,,PT_Normal,,,,,5JXNX8pr1kyOmXRWAvkvdw,7qUpAXG7dk+8p3OnysDIAQ,,,N,0,0,,,2012-06-20 11:05,2012-06-20 11:05,admin,admin
1521,146244,5115,23029,5686,1,0,N,N,N,CP_Drtn,TT_Task,DT_FixedDUR2,RV_OK,TK_NotStart,DS085,Lifting Production Deck on Below Production Level,,0,0,120,0,0,0,120,0,0,0,,,,2012-11-10 08:00,2012-11-27 16:00,,2012-11-10 08:00,2012-11-27 16:00,2012-11-10 08:00,2012-11-27 16:00,2012-11-10 08:00,2012-11-27 16:00,,2012-11-10 08:00,2012-11-27 16:00,,PT_Normal,,,,,6UNw04KeAkqMJFeDFSrwhw,pvhdQ+zLoUGlsGsHJLF0kg,,,Y,0,0,,,2012-06-20 11:05,2012-06-20 11:05,admin,admin
1522,146245,5115,23029,5686,1,0,N,N,N,CP_Drtn,TT_Task,DT_FixedDUR2,RV_OK,TK_NotStart,DS086,Fabrication & Installation of Deck Str. Miscellence / Padeyes,,80,24,960,0,0,0,960,0,0,0,,,,2012-10-17 08:00,2013-03-13 16:00,,2012-10-04 08:00,2013-03-02 16:00,2012-10-04 08:00,2013-03-02 16:00,2012-10-04 08:00,2013-03-02 16:00,,2012-10-17 08:00,2013-03-13 16:00,,PT_Normal,,,,,SDc6bVqAaUaQt17XbKhsaQ,or5G+IMdSky8NZLBdVW8xQ,,,N,0,0,,,2012-06-20 11:05,2012-06-20 11:05,admin,admin
1523,146246,5115,23029,5686,0,0,N,N,N,CP_Drtn,TT_FinMile,DT_FixedDrtn,RV_OK,TK_NotStart,DS087,Physical Weighting,,80,0,0,0,0,0,0,0,0,0,,,,2013-03-06 16:00,2013-03-06 16:00,,2013-02-23 16:00,2013-02-23 16:00,2013-02-23 16:00,2013-02-23 16:00,2013-02-23 16:00,2013-02-23 16:00,,2013-03-06 16:00,2013-03-06 16:00,,PT_Normal,,,,,lI6qOpv4bkeYGf9rvJSIUg,JGpic5NftEGkYFLxWQfh6Q,,,N,0,0,,,2012-06-20 11:05,2012-06-20 11:05,admin,admin
1524,146247,5115,23029,5686,1,0,N,N,N,CP_Drtn,TT_Task,DT_FixedDUR2,RV_OK,TK_NotStart,DS078,Clearanse of structure (Fab. & Painting ) Punch List,,56,56,168,0,0,0,168,0,0,0,,,,2013-03-14 08:00,2013-04-07 16:00,,2013-03-06 08:00,2013-03-30 16:00,2013-03-06 08:00,2013-03-30 16:00,2013-03-06 08:00,2013-03-30 16:00,,2013-03-14 08:00,2013-04-07 16:00,,PT_Normal,,,,,+YSULhPU5k6GuP38zWoqfA,UIxplIh3eEeSSoKUHZsCug,,,N,0,0,,,2012-06-20 11:05,2012-06-20 11:05,admin,admin
1525,146248,5115,23031,5686,1,0,N,N,N,CP_Drtn,TT_Task,DT_FixedDUR2,RV_OK,TK_NotStart,TFS071,Piping and Piping Supports Fabrication and Painting,,320,320,800,0,0,0,800,0,0,0,,,,2012-09-10 08:00,2013-01-10 16:00,,2012-07-21 08:00,2012-11-24 16:00,2012-07-21 08:00,2012-11-24 16:00,2012-07-21 08:00,2012-11-24 16:00,,2012-09-10 08:00,2013-01-10 16:00,,PT_Normal,,,,,m+Y8jjyYT0mHAnCdkd0dXQ,Vo+VEHnX1Uib2F6euGIM0g,,,N,0,0,,,2012-06-20 11:05,2012-06-20 11:05,admin,admin
1526,146249,5115,23031,5686,1,0,N,N,N,CP_Drtn,TT_Task,DT_FixedDUR2,RV_OK,TK_NotStart,TSF072,Piping and Piping Supports Erection,,0,0,600,0,0,0,600,0,0,0,,,,2012-11-25 08:00,2013-02-23 16:00,,2012-11-25 08:00,2013-02-23 16:00,2012-11-25 08:00,2013-02-23 16:00,2012-11-25 08:00,2013-02-23 16:00,,2012-11-25 08:00,2013-02-23 16:00,,PT_Normal,,,,,go/pbtEnJ0ykjF5TlF26Iw,quyCDFL4eUW8pPpR3D60VQ,,,Y,0,0,,,2012-06-20 11:05,2012-06-20 11:05,admin,admin
1527,146250,5115,23032,5686,1,0,N,N,N,CP_Drtn,TT_Task,DT_FixedDUR2,RV_OK,TK_NotStart,TSF083,Equipment Erection on Below Production Level,,24,24,56,0,0,0,56,0,0,0,,,,2012-11-01 08:00,2012-11-08 16:00,,2012-10-29 08:00,2012-11-05 16:00,2012-10-29 08:00,2012-11-05 16:00,2012-10-29 08:00,2012-11-05 16:00,,2012-11-01 08:00,2012-11-08 16:00,,PT_Normal,,,,,WwL8s6X7U0OpFbi/Bggl+g,Qa6Zp0iH/keaZsqvOalZPQ,,,N,0,0,,,2012-06-20 11:05,2012-06-20 11:05,admin,admin
1528,146251,5115,23032,5686,1,0,N,N,N,CP_Drtn,TT_Task,DT_FixedDUR2,RV_OK,TK_NotStart,TSF084,Equipment Erection on Production Level,,216,216,120,0,0,0,120,0,0,0,,,,2012-12-30 08:00,2013-01-16 16:00,,2012-11-28 08:00,2012-12-15 16:00,2012-11-28 08:00,2012-12-15 16:00,2012-11-28 08:00,2012-12-15 16:00,,2012-12-30 08:00,2013-01-16 16:00,,PT_Normal,,,,,FwI9LqyYDU62xHb9UwDpRA,03vCXS0/Y0i+shto1SSNJQ,,,N,0,0,,,2012-06-20 11:05,2012-06-20 11:05,admin,admin
1529,146252,5115,23032,5686,1,0,N,N,N,CP_Drtn,TT_Task,DT_FixedDUR2,RV_OK,TK_NotStart,TSF085,Equipment Erection on Helideck,,400,400,56,0,0,0,56,0,0,0,,,,2013-02-16 08:00,2013-02-23 16:00,,2012-12-16 08:00,2012-12-23 16:00,2012-12-16 08:00,2012-12-23 16:00,2012-12-16 08:00,2012-12-23 16:00,,2013-02-16 08:00,2013-02-23 16:00,,PT_Normal,,,,,eCxUGW21DUuyqRxSY+3RSg,2mIAAJqfL02S54HKn+zoOQ,,,N,0,0,,,2012-06-20 11:05,2012-06-20 11:05,admin,admin
1530,146253,5115,23033,5686,1,0,N,N,N,CP_Drtn,TT_Task,DT_FixedDUR2,RV_OK,TK_NotStart,TS77,E&I Activity,,16,16,720,0,0,0,720,0,0,0,,,,2012-11-12 08:00,2013-02-28 16:00,,2012-11-10 08:00,2013-02-26 16:00,2012-11-10 08:00,2013-02-26 16:00,2012-11-10 08:00,2013-02-26 16:00,,2012-11-12 08:00,2013-02-28 16:00,,PT_Normal,,,,,/hz2mF4to0W8w8G02tdrJQ,+j8BLsZNOU+OrJICVK5F1w,,,N,0,0,,,2012-06-20 11:05,2012-06-20 11:05,admin,admin
1531,146254,5115,23034,5686,1,0,N,N,N,CP_Drtn,TT_Task,DT_FixedDUR2,RV_OK,TK_NotStart,TS78,"Pre-commissioning """" Piping Hydrotest , Reinstatment , Megering , Continuity Test and Touch Up """"",,0,0,280,0,0,0,280,0,0,0,,,,2013-02-18 08:00,2013-03-30 16:00,,2013-02-18 08:00,2013-03-30 16:00,2013-02-18 08:00,2013-03-30 16:00,2013-02-18 08:00,2013-03-30 16:00,,2013-02-18 08:00,2013-03-30 16:00,,PT_Normal,,,,,PGPg/X8CjkiK+IhMOme5JA,OTq2jcFatkOlMrI23bWX1Q,,,Y,0,0,,,2012-06-20 11:05,2012-06-20 11:05,admin,admin
1532,146255,5115,23016,5686,1,0,N,N,N,CP_Drtn,TT_Task,DT_FixedDUR2,RV_OK,TK_NotStart,PL71,P/L Spools Fabrication,,832,0,720,0,0,0,720,0,0,0,,,,2012-11-07 08:00,2013-02-24 16:00,,2012-06-30 08:00,2012-10-17 16:00,2012-06-30 08:00,2012-10-17 16:00,2012-06-30 08:00,2012-10-17 16:00,,2012-11-07 08:00,2013-02-24 16:00,,PT_Normal,,,,,TDStMwLZo0WunM8oT9F+WQ,fNpyI06rOEST5I8j8iDnuA,,,N,0,0,,,2012-06-20 11:05,2012-06-20 11:05,admin,admin
1533,146256,5115,23017,5686,0,0,N,N,N,CP_Drtn,TT_Mile,DT_FixedDrtn,RV_OK,TK_NotStart,LOPS111,Arrival of 01st Shipment Material Barge ( P/L Spools),,0,128,0,0,0,0,0,0,0,0,2012-09-15 08:00,,,2012-09-15 08:00,2012-09-15 08:00,,2012-09-15 08:00,2012-09-15 08:00,2012-09-15 08:00,2012-09-15 08:00,2012-09-15 08:00,2012-09-15 08:00,,2012-09-15 08:00,2012-09-15 08:00,CS_MSO,PT_Normal,,,,,oDAevliim0uQ25cjiADl7g,xehV9+x7ZE2jS/zzmhzWQA,,,N,0,0,,,2012-06-20 11:05,2012-06-20 11:05,admin,admin
1534,146257,5115,23017,5686,1,0,N,N,N,CP_Drtn,TT_Task,DT_FixedDUR2,RV_OK,TK_NotStart,LOPS112,1st Shipment Material Barge Preparation,,1088,0,96,0,0,0,96,0,0,0,,,,2013-03-20 08:00,2013-04-02 16:00,,2012-10-03 08:00,2012-10-17 16:00,2012-10-03 08:00,2012-10-17 16:00,2012-10-03 08:00,2012-10-17 16:00,,2013-03-20 08:00,2013-04-02 16:00,,PT_Normal,,,,,OHmtk16Lp0apbcB0ByJqPQ,ndqnrpRNm0Kh7Ee9x77pLg,,,N,0,0,,,2012-06-20 11:05,2012-06-20 11:05,admin,admin
1535,146258,5115,23017,5686,1,0,N,N,N,CP_Drtn,TT_Task,DT_FixedDUR2,RV_OK,TK_NotStart,LOPS113,"L/O & Sea Fastening (P/L Spools 18"""" & 8"""")",,1088,0,32,0,0,0,32,0,0,0,,,,2013-04-03 08:00,2013-04-07 16:00,,2012-10-18 08:00,2012-10-22 16:00,2012-10-18 08:00,2012-10-22 16:00,2012-10-18 08:00,2012-10-22 16:00,,2013-04-03 08:00,2013-04-07 16:00,,PT_Normal,,,,,+Znn8p7WkUqR96vlQQesxg,kp9L75XeSkWVYE8hGyBpLQ,,,N,0,0,,,2012-06-20 11:05,2012-06-20 11:05,admin,admin
1536,146259,5115,23020,5686,0,0,N,N,N,CP_Drtn,TT_Mile,DT_FixedDrtn,RV_OK,TK_NotStart,LOJK111,Arrival of 02nd Shipment Material Barge ( Jacket and Piles ),,0,263.983333,0,0,0,0,0,0,0,0,2012-12-01 08:01,,,2012-12-01 08:01,2012-12-01 08:01,,2012-12-01 08:01,2012-12-01 08:01,2012-12-01 08:01,2012-12-01 08:01,2012-12-01 08:01,2012-12-01 08:01,,2012-12-01 08:01,2012-12-01 08:01,CS_MSO,PT_Normal,,,,,nFKYCIQZFUeYUXkojlSMWg,/rdQ3u43Y0aVeyWgwwuYrQ,,,N,0,0,,,2012-06-20 11:05,2012-06-20 11:05,admin,admin
1537,146260,5115,23020,5686,1,0,N,N,N,CP_Drtn,TT_Task,DT_FixedDUR2,RV_OK,TK_NotStart,LOJK112,02nd Shipment Material Barge Preparation,,208,0,96,0,0,0,96,0,0,0,,,,2013-02-11 08:00,2013-02-24 16:00,,2013-01-09 08:00,2013-01-22 16:00,2013-01-09 08:00,2013-01-22 16:00,2013-01-09 08:00,2013-01-22 16:00,,2013-02-11 08:00,2013-02-24 16:00,,PT_Normal,,,,,Q9xOSsFMME24igusCIIQtQ,S7wGNTJDfUW+8AjycDcj2g,,,N,0,0,,,2012-06-20 11:05,2012-06-20 11:05,admin,admin
1538,146261,5115,23020,5686,1,0,N,N,N,CP_Drtn,TT_Task,DT_FixedDUR2,RV_OK,TK_NotStart,LOJK113,L/O & Sea fastening ( Jacket & Piles ),,208,0,56,0,0,0,56,0,0,0,,,,2013-02-25 08:00,2013-03-04 16:00,,2013-01-23 08:00,2013-01-31 16:00,2013-01-23 08:00,2013-01-31 16:00,2013-01-23 08:00,2013-01-31 16:00,,2013-02-25 08:00,2013-03-04 16:00,,PT_Normal,,,,,/GRPAvji2UCNYRxJqOdO1g,T2pkffL22UqmUBjuIecM7w,,,N,0,0,,,2012-06-20 11:05,2012-06-20 11:05,admin,admin
1539,146262,5115,23015,5686,0,0,N,N,N,CP_Drtn,TT_Mile,DT_FixedDrtn,RV_OK,TK_NotStart,LODK111,Arrival of 03rd Shipment Material Barge ( Deck C/W TSF ),,-0.016667,104,0,0,0,0,0,0,0,0,2013-03-01 08:01,,,2013-02-28 15:59,2013-02-28 15:59,,2013-03-02 08:00,2013-03-02 08:00,2013-03-02 08:00,2013-03-02 08:00,2013-03-02 08:00,2013-03-02 08:00,,2013-02-28 15:59,2013-02-28 15:59,CS_MSO,PT_Normal,,,,,3hV4IBQpOUuBMXu19e6ZHw,+yVxVOPraUyK1NRhdp+wfA,,,N,0,0,,,2012-06-20 11:05,2012-06-20 11:05,admin,admin
1540,146263,5115,23015,5686,1,0,N,N,N,CP_Drtn,TT_Task,DT_FixedDUR2,RV_OK,TK_NotStart,LODK112,3rd Shipment Material Barge Preparation,,0,0,96,0,0,0,96,0,0,0,,,,2013-03-17 08:00,2013-03-30 16:00,,2013-03-17 08:00,2013-03-30 16:00,2013-03-17 08:00,2013-03-30 16:00,2013-03-17 08:00,2013-03-30 16:00,,2013-03-17 08:00,2013-03-30 16:00,,PT_Normal,,,,,ofaO3yXJTE+V92Y2d5IMuQ,udpKSE0PREWpEz84cupRDw,,,Y,0,0,,,2012-06-20 11:05,2012-06-20 11:05,admin,admin
1541,146264,5115,23015,5686,1,0,N,N,N,CP_Drtn,TT_Task,DT_FixedDUR2,RV_OK,TK_NotStart,LODK113,L/O & Sea fastening ( Deck),,0,0,56,0,0,0,56,0,0,0,,,,2013-03-31 08:00,2013-04-07 16:00,,2013-03-31 08:00,2013-04-07 16:00,2013-03-31 08:00,2013-04-07 16:00,2013-03-31 08:00,2013-04-07 16:00,,2013-03-31 08:00,2013-04-07 16:00,,PT_Normal,,,,,+hIw77JJ8UCAou5y8GiWGg,InSRN6FydkWjBf3988Pjxg,,,Y,0,0,,,2012-06-20 11:05,2012-06-20 11:05,admin,admin
1542,146265,5115,23004,794,1,0,N,N,N,CP_Drtn,TT_Task,DT_FixedDrtn,RV_OK,TK_NotStart,PRP152,"Pipeline 8"""" & Fittings",,-0.016667,2087,408,0,0,0,408,0,0,0,2012-05-30 17:00,,,2012-05-30 16:59,2012-07-20 16:59,,2012-05-31 08:00,2012-07-20 17:00,2012-05-31 08:00,2012-07-20 17:00,2012-05-31 08:00,2012-07-20 17:00,,2012-05-30 16:59,2012-07-20 16:59,CS_MSO,PT_Normal,,,,,9vrDOy2V20OAgUN/D1YDSQ,9oZfFZekBkiGUClhj5HB5A,,,N,0,0,,,2012-06-20 11:05,2012-06-20 11:05,admin,admin
1543,146266,5115,23029,5686,1,0,N,N,N,CP_Drtn,TT_Task,DT_FixedDUR2,RV_OK,TK_NotStart,DS091,Fabrication and Painting of Below Production Deck/Legs,,0,0,840,0,0,0,840,0,0,0,,,,2012-06-13 08:00,2012-10-18 16:00,,2012-06-13 08:00,2012-10-18 16:00,2012-06-13 08:00,2012-10-18 16:00,2012-06-13 08:00,2012-10-18 16:00,,2012-06-13 08:00,2012-10-18 16:00,,PT_Normal,,,,,lHbnqjcAfEqeV/fg2dvNhw,YDhnGt4WSampcAcCK/B2gQ,,,Y,0,0,,,2012-06-20 11:05,2012-06-20 11:05,admin,admin
1544,146267,5115,23029,5686,1,0,N,N,N,CP_Drtn,TT_Task,DT_FixedDUR2,RV_OK,TK_NotStart,DS092,Fabrication and Painting of Production Deck,,0,0,960,0,0,0,960,0,0,0,,,,2012-06-13 08:00,2012-11-08 16:00,,2012-06-13 08:00,2012-11-08 16:00,2012-06-13 08:00,2012-11-08 16:00,2012-06-13 08:00,2012-11-08 16:00,,2012-06-13 08:00,2012-11-08 16:00,,PT_Normal,,,,,13+KtJ0M9USY9kUduECA5w,xFi93CoKSi++4GmIMxpP9w,,,Y,0,0,,,2012-06-20 11:05,2012-06-20 11:05,admin,admin
1545,146268,5115,23029,5686,1,0,N,N,N,CP_Drtn,TT_Task,DT_FixedDUR2,RV_OK,TK_NotStart,DS093,Fabrication and Paint of Heli-Deck ( & Lifting if Required),,400,0,960,0,0,0,960,0,0,0,,,,2012-10-29 08:00,2013-03-21 16:00,,2012-08-27 08:00,2013-01-20 16:00,2012-08-27 08:00,2013-01-20 16:00,2012-08-27 08:00,2013-01-20 16:00,,2012-10-29 08:00,2013-03-21 16:00,,PT_Normal,,,,,970vMC6w40SNkRpZmUh73A,rvAg4dTFTzOC9LQPbMvlVA,,,N,0,0,,,2012-06-20 11:05,2012-06-20 11:05,admin,admin
1546,146269,5115,23029,5686,1,0,N,N,N,CP_Drtn,TT_Task,DT_FixedDUR2,RV_OK,TK_NotStart,DS094,Lifting Below Production Deck on High Cups,,24,0,40,0,0,0,40,0,0,0,,,,2012-10-23 08:00,2012-10-31 16:00,,2012-10-20 08:00,2012-10-24 16:00,2012-10-20 08:00,2012-10-24 16:00,2012-10-20 08:00,2012-10-24 16:00,,2012-10-23 08:00,2012-10-31 16:00,,PT_Normal,,,,,q4ln86SSK0myQo2NDhc58g,bQ+CxC0TQriVcwNqie/vXQ,,,N,0,0,,,2012-06-20 11:05,2012-06-20 11:05,admin,admin
1547,146270,5115,23029,5686,1,0,N,N,N,CP_Drtn,TT_Task,DT_FixedDUR2,RV_OK,TK_NotStart,DS095,Lifting Production Deck on Below Production Level,,0,0,120,0,0,0,120,0,0,0,,,,2012-11-10 08:00,2012-11-27 16:00,,2012-11-10 08:00,2012-11-27 16:00,2012-11-10 08:00,2012-11-27 16:00,2012-11-10 08:00,2012-11-27 16:00,,2012-11-10 08:00,2012-11-27 16:00,,PT_Normal,,,,,DzFbitFfC0qNqSZKu5T3AQ,kvv6UChdRT2TML26fqP2Og,,,Y,0,0,,,2012-06-20 11:05,2012-06-20 11:05,admin,admin
1548,146271,5115,23029,5686,1,0,N,N,N,CP_Drtn,TT_Task,DT_FixedDUR2,RV_OK,TK_NotStart,DS096,Fabrication & Installation of Deck Str. Miscellence / Padeyes,,80,24,960,0,0,0,960,0,0,0,,,,2012-10-17 08:00,2013-03-13 16:00,,2012-10-04 08:00,2013-03-02 16:00,2012-10-04 08:00,2013-03-02 16:00,2012-10-04 08:00,2013-03-02 16:00,,2012-10-17 08:00,2013-03-13 16:00,,PT_Normal,,,,,wZrorAdHukilyIgu1B6yBg,CWEx43mfRrCS6ZOEt8Q5OA,,,N,0,0,,,2012-06-20 11:05,2012-06-20 11:05,admin,admin
1549,146272,5115,23029,5686,0,0,N,N,N,CP_Drtn,TT_FinMile,DT_FixedDrtn,RV_OK,TK_NotStart,DS097,Physical Weighting,,80,0,0,0,0,0,0,0,0,0,,,,2013-03-06 16:00,2013-03-06 16:00,,2013-02-23 16:00,2013-02-23 16:00,2013-02-23 16:00,2013-02-23 16:00,2013-02-23 16:00,2013-02-23 16:00,,2013-03-06 16:00,2013-03-06 16:00,,PT_Normal,,,,,6CFUyOiMzUOobfmW+9YeJg,dU19c7ngSBGK2PpNjJWMWA,,,N,0,0,,,2012-06-20 11:05,2012-06-20 11:05,admin,admin
1550,146273,5115,23032,5686,1,0,N,N,N,CP_Drtn,TT_Task,DT_FixedDUR2,RV_OK,TK_NotStart,TSF093,Equipment Erection on Below Production Level,,24,24,56,0,0,0,56,0,0,0,,,,2012-11-01 08:00,2012-11-08 16:00,,2012-10-29 08:00,2012-11-05 16:00,2012-10-29 08:00,2012-11-05 16:00,2012-10-29 08:00,2012-11-05 16:00,,2012-11-01 08:00,2012-11-08 16:00,,PT_Normal,,,,,0mAzN0NjD061jC8DWfUHjA,LQiCxK3/v0WUQtxj4/eZtw,,,N,0,0,,,2012-06-20 11:05,2012-06-20 11:05,admin,admin
1551,146274,5115,23032,5686,1,0,N,N,N,CP_Drtn,TT_Task,DT_FixedDUR2,RV_OK,TK_NotStart,TSF094,Equipment Erection on Production Level,,216,216,120,0,0,0,120,0,0,0,,,,2012-12-30 08:00,2013-01-16 16:00,,2012-11-28 08:00,2012-12-15 16:00,2012-11-28 08:00,2012-12-15 16:00,2012-11-28 08:00,2012-12-15 16:00,,2012-12-30 08:00,2013-01-16 16:00,,PT_Normal,,,,,2XtsuJtRZ0mt4nqR6FVrlg,f3d6itKKc0eAsKFsmlMw9g,,,N,0,0,,,2012-06-20 11:05,2012-06-20 11:05,admin,admin
1552,146275,5115,23032,5686,1,0,N,N,N,CP_Drtn,TT_Task,DT_FixedDUR2,RV_OK,TK_NotStart,TSF095,Equipment Erection on Helideck,,400,400,56,0,0,0,56,0,0,0,,,,2013-02-16 08:00,2013-02-23 16:00,,2012-12-16 08:00,2012-12-23 16:00,2012-12-16 08:00,2012-12-23 16:00,2012-12-16 08:00,2012-12-23 16:00,,2013-02-16 08:00,2013-02-23 16:00,,PT_Normal,,,,,kgNGjyzMUEiD/4afmb/R4Q,aUBY6CFV5USUmrHmKoFEjw,,,N,0,0,,,2012-06-20 11:05,2012-06-20 11:05,admin,admin
1553,146310,5265,23074,5686,0,0,N,N,N,CP_Drtn,TT_Mile,DT_FixedDrtn,RV_OK,TK_NotStart,GM04,Ready for Load out ( 02nd Shipment/ Jacket & Piles ),,208,208,0,0,0,0,0,0,0,0,,,,2013-02-25 08:00,2013-02-25 08:00,,2013-01-23 08:00,2013-01-23 08:00,2013-01-23 08:00,2013-01-23 08:00,2013-01-23 08:00,2013-01-23 08:00,,2013-02-25 08:00,2013-02-25 08:00,,PT_Normal,,,,,vaGnkkYEfkizRaPO+ESgZw,,,,N,0,0,,,2012-06-20 14:03,2012-06-20 14:03,admin,admin
