,task_id,proj_id,wbs_id,clndr_id,phys_complete_pct,rev_fdbk_flag,lock_plan_flag,auto_compute_act_flag,complete_pct_type,task_type,duration_type,status_code,task_code,task_name,rsrc_id,total_float_hr_cnt,free_float_hr_cnt,remain_drtn_hr_cnt,act_work_qty,remain_work_qty,target_work_qty,target_drtn_hr_cnt,target_equip_qty,act_equip_qty,remain_equip_qty,cstr_date,act_start_date,act_end_date,late_start_date,late_end_date,expect_end_date,early_start_date,early_end_date,restart_date,reend_date,target_start_date,target_end_date,rem_late_start_date,rem_late_end_date,cstr_type,priority_type,suspend_date,resume_date,float_path,float_path_order,guid,tmpl_guid,cstr_date2,cstr_type2,driving_path_flag,act_this_per_work_qty,act_this_per_equip_qty,external_early_start_date,external_late_end_date,create_date,update_date,create_user,update_user,location_id
0,101717,4512,26142,6590,0,N,N,N,CP_Drtn,TT_Task,DT_FixedDUR2,TK_NotStart,JF721.320,PO Issued,,272,0,24,0,0,0,24,0,0,0,,,,2012-07-30 15:00,2012-08-02 09:00,,2012-07-01 13:00,2012-07-03 17:00,2012-07-01 13:00,2012-07-03 17:00,2012-07-01 13:00,2012-07-03 17:00,2012-07-30 15:00,2012-08-02 09:00,,PT_Normal,,,,,T/oad8DTBkuyjfZTZt+2IA,zCk7aObfCUGOntxgxjFmMQ,,,N,0,0,,,2013-11-05 11:09,2013-11-05 11:09,admin,admin,
1,101718,4512,26142,6590,0,N,N,N,CP_Drtn,TT_Task,DT_FixedDUR2,TK_NotStart,JF721.321,Ma'aden Site Delievery,,272,0,56,0,0,0,56,0,0,0,,,,2012-08-02 09:00,2012-08-08 10:00,,2012-07-04 07:00,2012-07-10 08:00,2012-07-04 07:00,2012-07-10 08:00,2012-07-04 07:00,2012-07-10 08:00,2012-08-02 09:00,2012-08-08 10:00,,PT_Normal,,,,,0Sgey7t6W0atx+v1l5Jl2g,6oHrZtG370unhirho4VupA,,,N,0,0,,,2013-11-05 11:09,2013-11-05 11:09,admin,admin,
2,101719,4512,26080,6590,0,N,N,N,CP_Drtn,TT_Task,DT_FixedDUR2,TK_NotStart,JF721.322,Approval for Vendor Drawings & SPecifications,,352,0,24,0,0,0,24,0,0,0,,,,2012-09-03 16:00,2012-09-06 10:00,,2012-07-24 14:00,2012-07-27 10:30,2012-07-24 14:00,2012-07-27 10:30,2012-07-24 14:00,2012-07-27 10:30,2012-09-03 16:00,2012-09-06 10:00,,PT_Normal,,,,,QnxD6XdTwUO09jBJRyz1nw,6r11gtJdnUe/59WOKiaHmQ,,,N,0,0,,,2013-11-05 11:09,2013-11-05 11:09,admin,admin,
3,101720,4512,26080,6590,0,N,N,N,CP_Drtn,TT_Task,DT_FixedDUR2,TK_NotStart,JF721.323,PO Issued,,1328,0,216,0,0,0,216,0,0,0,,,,2012-12-22 11:00,2013-01-14 12:00,,2012-07-27 10:30,2012-08-22 14:00,2012-07-27 10:30,2012-08-22 14:00,2012-07-27 10:30,2012-08-22 14:00,2012-12-22 11:00,2013-01-14 12:00,,PT_Normal,,,,,NCA5ArXcL0uBhKyXI2t1XQ,NmLAcJcOhUaoeMu+fvzAow,,,N,0,0,,,2013-11-05 11:09,2013-11-05 11:09,admin,admin,
4,101721,4512,26080,6590,0,N,N,N,CP_Drtn,TT_Task,DT_FixedDUR2,TK_NotStart,JF721.324,CP System Delievered to Ma'aden Site & Installed,6965,272,0,240,0,2250,2250,240,1000,0,1000,,,,2013-05-24 12:30,2013-06-19 10:00,,2013-04-25 08:00,2013-05-21 08:00,2013-04-25 08:00,2013-05-21 08:00,2013-04-25 08:00,2013-05-21 08:00,2013-05-24 12:30,2013-06-19 10:00,,PT_Normal,,,,,uwVfmXb4hEizuB4gC4ryvA,+o+DyVVQ/kCd+4ON0641Rw,,,N,0,0,,,2013-11-05 11:09,2013-11-05 11:09,admin,admin,
5,101722,4512,26080,6590,0,N,N,N,CP_Drtn,TT_Task,DT_FixedDUR2,TK_NotStart,JF721.325,Ma'aden CP Inspection,6964,272,0,24,0,80,80,24,40,0,40,,,,2013-06-19 10:00,2013-06-22 09:00,,2013-05-21 08:00,2013-05-23 12:00,2013-05-21 08:00,2013-05-23 12:00,2013-05-21 08:00,2013-05-23 12:00,2013-06-19 10:00,2013-06-22 09:00,,PT_Normal,,,,,kVe0BI0PZ0OOiyeP1BLRxw,DX4s+DB7hUuHMSWuFd396Q,,,N,0,0,,,2013-11-05 11:09,2013-11-05 11:09,admin,admin,
6,101723,4512,26045,6590,0,N,N,N,CP_Drtn,TT_Task,DT_FixedDUR2,TK_NotStart,JF721.328,Approval For Vendor Drawings & Specifications,,352,0,24,0,0,0,24,0,0,0,,,,2012-09-03 16:00,2012-09-06 10:00,,2012-07-24 14:00,2012-07-27 10:30,2012-07-24 14:00,2012-07-27 10:30,2012-07-24 14:00,2012-07-27 10:30,2012-09-03 16:00,2012-09-06 10:00,,PT_Normal,,,,,XDmFCoe/rUmmw6uqcKigmA,xFeCmUgdS0OLH25pLZzIMQ,,,N,0,0,,,2013-11-05 11:09,2013-11-05 11:09,admin,admin,
7,101724,4512,26045,6590,0,N,N,N,CP_Drtn,TT_Task,DT_FixedDUR2,TK_NotStart,JF721.329,P.O Issued,,1328,0,216,0,0,0,216,0,0,0,,,,2012-12-22 11:00,2013-01-14 12:00,,2012-07-27 10:30,2012-08-22 14:00,2012-07-27 10:30,2012-08-22 14:00,2012-07-27 10:30,2012-08-22 14:00,2012-12-22 11:00,2013-01-14 12:00,,PT_Normal,,,,,199nQXkmpkWWySSCkmbcJg,qnXKJs7SVE2Aq/+ydLIq0g,,,N,0,0,,,2013-11-05 11:09,2013-11-05 11:09,admin,admin,
8,101725,4512,26046,6590,0,N,N,N,CP_Drtn,TT_Task,DT_FixedDUR2,TK_NotStart,JF721.330,Approval for vendor Drawings & Specifcations,,352,0,24,0,0,0,24,0,0,0,,,,2012-09-03 16:00,2012-09-06 10:00,,2012-07-24 14:00,2012-07-27 10:30,2012-07-24 14:00,2012-07-27 10:30,2012-07-24 14:00,2012-07-27 10:30,2012-09-03 16:00,2012-09-06 10:00,,PT_Normal,,,,,zhBl2Q5mZUm6Zh0wvyELhg,cSJ8dgKJP0Ww5ZhDDHiEBQ,,,N,0,0,,,2013-11-05 11:09,2013-11-05 11:09,admin,admin,
9,101726,4512,26046,6590,0,N,N,N,CP_Drtn,TT_Task,DT_FixedDUR2,TK_NotStart,JF721.331,P.O Issued,,1328,0,216,0,0,0,216,0,0,0,,,,2012-12-22 11:00,2013-01-14 12:00,,2012-07-27 10:30,2012-08-22 14:00,2012-07-27 10:30,2012-08-22 14:00,2012-07-27 10:30,2012-08-22 14:00,2012-12-22 11:00,2013-01-14 12:00,,PT_Normal,,,,,DllYCkazDUCFNJjjIsMqtw,oeNA0lF1IUuYn1p65K4tsA,,,N,0,0,,,2013-11-05 11:09,2013-11-05 11:09,admin,admin,
10,101727,4512,26046,6590,0,N,N,N,CP_Drtn,TT_Task,DT_FixedDUR2,TK_NotStart,JF721.332,Instrumentation Delievered to Ma'aden & Installed,6942,272,0,232,0,1260,1260,232,560,0,560,,,,2013-06-22 09:00,2013-07-16 16:00,,2013-05-23 12:00,2013-06-17 14:00,2013-05-23 12:00,2013-06-17 14:00,2013-05-23 12:00,2013-06-17 14:00,2013-06-22 09:00,2013-07-16 16:00,,PT_Normal,,,,,9EZm2Ai1aEGYTY4j/Sp6bQ,XWpE3LpQKUSrjVSLh/WhAA,,,N,0,0,,,2013-11-05 11:09,2013-11-05 11:09,admin,admin,
11,101728,4512,26046,6590,0,N,N,N,CP_Drtn,TT_Task,DT_FixedDUR2,TK_NotStart,JF721.333,Ma'aden Instrumentation Inspection,6942,272,0,24,0,80,80,24,40,0,40,,,,2013-07-16 16:00,2013-07-19 12:30,,2013-06-17 14:00,2013-06-20 08:00,2013-06-17 14:00,2013-06-20 08:00,2013-06-17 14:00,2013-06-20 08:00,2013-07-16 16:00,2013-07-19 12:30,,PT_Normal,,,,,ISM75neHJkSa8CYlKBOLBA,o7LARIfvNEaQ09oTYwd4YA,,,N,0,0,,,2013-11-05 11:09,2013-11-05 11:09,admin,admin,
12,101729,4512,26042,6590,0,N,N,N,CP_Drtn,TT_Task,DT_FixedDUR2,TK_NotStart,JF721.334,Approve Vendor Drawings & Specifcations,,352,0,24,0,0,0,24,0,0,0,,,,2012-08-28 07:00,2012-08-30 11:00,,2012-07-17 15:00,2012-07-20 11:30,2012-07-17 15:00,2012-07-20 11:30,2012-07-17 15:00,2012-07-20 11:30,2012-08-28 07:00,2012-08-30 11:00,,PT_Normal,,,,,1g4vNk+iHU2f706T8KsJGw,UxxwI734Ikm3B6zma4PbGA,,,N,0,0,,,2013-11-05 11:09,2013-11-05 11:09,admin,admin,
13,101730,4512,26042,6590,0,N,N,N,CP_Drtn,TT_Task,DT_FixedDUR2,TK_NotStart,JF721.335,P.O Issued,,352,0,24,0,0,0,24,0,0,0,,,,2012-08-30 11:00,2012-09-02 10:00,,2012-07-20 11:30,2012-07-23 08:00,2012-07-20 11:30,2012-07-23 08:00,2012-07-20 11:30,2012-07-23 08:00,2012-08-30 11:00,2012-09-02 10:00,,PT_Normal,,,,,42LJRWY15Uua3r1Eq6qHPw,Y+QGEhmC5UqgCTu9l309JA,,,N,0,0,,,2013-11-05 11:09,2013-11-05 11:09,admin,admin,
14,101731,4512,26065,6590,0,N,N,N,CP_Drtn,TT_Task,DT_FixedDUR2,TK_NotStart,JF721.336,Approval for Vendor Drawings & Specifications,,352,0,48,0,0,0,48,0,0,0,,,,2012-09-06 10:00,2012-09-11 13:00,,2012-07-27 10:30,2012-08-01 11:00,2012-07-27 10:30,2012-08-01 11:00,2012-07-27 10:30,2012-08-01 11:00,2012-09-06 10:00,2012-09-11 13:00,,PT_Normal,,,,,1Ke+WccJ0Ey/H+MB5+otDA,At760YrmaEqZSF6XKJXmdA,,,N,0,0,,,2013-11-05 11:09,2013-11-05 11:09,admin,admin,
15,101732,4512,26065,6590,0,N,N,N,CP_Drtn,TT_Task,DT_FixedDUR2,TK_NotStart,JF721.337,PO  Issued,,1264,0,48,0,0,0,48,0,0,0,,,,2012-12-20 10:00,2012-12-25 13:00,,2012-08-01 11:00,2012-08-06 14:00,2012-08-01 11:00,2012-08-06 14:00,2012-08-01 11:00,2012-08-06 14:00,2012-12-20 10:00,2012-12-25 13:00,,PT_Normal,,,,,VYLsxEOBXk6SveFo1PWEZw,QM2hzVjO+0OX23YpP0LSlA,,,N,0,0,,,2013-11-05 11:09,2013-11-05 11:09,admin,admin,
16,101733,4512,26044,6590,0,N,N,N,CP_Drtn,TT_Task,DT_FixedDUR2,TK_NotStart,JF721.338,Approval for Vendor Drawings & Specifications,,352,0,48,0,0,0,48,0,0,0,,,,2012-09-06 10:00,2012-09-11 13:00,,2012-07-27 10:30,2012-08-01 11:00,2012-07-27 10:30,2012-08-01 11:00,2012-07-27 10:30,2012-08-01 11:00,2012-09-06 10:00,2012-09-11 13:00,,PT_Normal,,,,,luwdIQwZ70uRE46DhznhvA,P4hIy46WnkaAgBahNcd1Fg,,,N,0,0,,,2013-11-05 11:09,2013-11-05 11:09,admin,admin,
17,101734,4512,26044,6590,0,N,N,N,CP_Drtn,TT_Task,DT_FixedDUR2,TK_NotStart,JF721.339,PO issued,,352,0,48,0,0,0,48,0,0,0,,,,2012-09-11 13:00,2012-09-16 16:00,,2012-08-01 11:00,2012-08-06 14:00,2012-08-01 11:00,2012-08-06 14:00,2012-08-01 11:00,2012-08-06 14:00,2012-09-11 13:00,2012-09-16 16:00,,PT_Normal,,,,,djG/P7ufLkm+XuENaz8t1w,Q+7N4KuxlESJ8vFhIW4qJw,,,N,0,0,,,2013-11-05 11:09,2013-11-05 11:09,admin,admin,
18,101735,4512,26067,6590,0,N,N,N,CP_Drtn,TT_Task,DT_FixedDUR2,TK_NotStart,JF721.340,Approval For vendor Specifcations,,680,0,64,0,0,0,64,0,0,0,,,,2012-10-16 16:00,2012-10-23 15:00,,2012-08-01 11:00,2012-08-08 10:00,2012-08-01 11:00,2012-08-08 10:00,2012-08-01 11:00,2012-08-08 10:00,2012-10-16 16:00,2012-10-23 15:00,,PT_Normal,,,,,efhnQOCqo0y1hA73tkFeOA,y+HmYyh9cEyxgRIPJ0WXkQ,,,N,0,0,,,2013-11-05 11:09,2013-11-05 11:09,admin,admin,
19,101736,4512,26067,6590,0,N,N,N,CP_Drtn,TT_Task,DT_FixedDUR2,TK_NotStart,JF721.341,PO issued,,680,0,32,0,0,0,32,0,0,0,,,,2012-10-23 15:00,2012-10-28 17:00,,2012-08-08 10:00,2012-08-11 17:00,2012-08-08 10:00,2012-08-11 17:00,2012-08-08 10:00,2012-08-11 17:00,2012-10-23 15:00,2012-10-28 17:00,,PT_Normal,,,,,Fgp5hsn8lUKGnwo9RMAlhA,np9x9mx8dE6Sens4t7ctEQ,,,N,0,0,,,2013-11-05 11:09,2013-11-05 11:09,admin,admin,
20,101737,4512,26068,6590,0,N,N,N,CP_Drtn,TT_Task,DT_FixedDUR2,TK_NotStart,JF721.342,Plates,,352,0,736,0,0,0,736,0,0,0,,,,2012-09-02 10:00,2012-11-21 16:00,,2012-07-23 08:00,2012-10-13 14:00,2012-07-23 08:00,2012-10-13 14:00,2012-07-23 08:00,2012-10-13 14:00,2012-09-02 10:00,2012-11-21 16:00,,PT_Normal,,,,,84CVgu4BK0a01kVWHeGLxg,p4b5Mw6c2Uau5vTANZNEzw,,,N,0,0,,,2013-11-05 11:09,2013-11-05 11:09,admin,admin,
21,101738,4512,26068,6590,0,N,N,N,CP_Drtn,TT_Task,DT_FixedDUR2,TK_NotStart,JF721.344,Profile Material,,1264,64,256,0,0,0,256,0,0,0,,,,2012-12-25 13:00,2013-01-22 09:00,,2012-08-06 14:00,2012-09-06 10:00,2012-08-06 14:00,2012-09-06 10:00,2012-08-06 14:00,2012-09-06 10:00,2012-12-25 13:00,2013-01-22 09:00,,PT_Normal,,,,,KDccazFDDUW9k1bEkkcY8g,XvbN9j8Um0u+a5vi4V340A,,,N,0,0,,,2013-11-05 11:09,2013-11-05 11:09,admin,admin,
22,101739,4512,26068,6590,0,N,N,N,CP_Drtn,TT_Task,DT_FixedDUR2,TK_NotStart,JF721.343,Pipes & Fittings,,352,0,376,0,0,0,376,0,0,0,,,,2012-09-16 16:00,2012-10-28 17:00,,2012-08-06 14:00,2012-09-19 10:00,2012-08-06 14:00,2012-09-19 10:00,2012-08-06 14:00,2012-09-19 10:00,2012-09-16 16:00,2012-10-28 17:00,,PT_Normal,,,,,vgNT16VQDEiUPXuBOBz0Bg,xlcN0EV8I0SapJEwHcmzTg,,,N,0,0,,,2013-11-05 11:09,2013-11-05 11:09,admin,admin,
23,101740,4512,26040,6590,0,N,N,N,CP_Drtn,TT_Task,DT_FixedDUR2,TK_NotStart,JF721.345,Define Layout,,352,0,24,0,0,0,24,0,0,0,,,,2012-10-14 12:00,2012-10-16 16:00,,2012-09-06 10:00,2012-09-09 09:00,2012-09-06 10:00,2012-09-09 09:00,2012-09-06 10:00,2012-09-09 09:00,2012-10-14 12:00,2012-10-16 16:00,,PT_Normal,,,,,3G6twJMsg0uejPlg8Ts0Tw,NqASMdRNOUqFzefQ0Sq3bQ,,,N,0,0,,,2013-11-05 11:09,2013-11-05 11:09,admin,admin,
24,101741,4512,26040,6590,0,N,N,N,CP_Drtn,TT_Task,DT_FixedDUR2,TK_NotStart,JF721.346,Cutting,,352,0,24,0,0,0,24,0,0,0,,,,2012-10-14 12:00,2012-10-16 16:00,,2012-09-06 10:00,2012-09-09 09:00,2012-09-06 10:00,2012-09-09 09:00,2012-09-06 10:00,2012-09-09 09:00,2012-10-14 12:00,2012-10-16 16:00,,PT_Normal,,,,,GuhtaQP89EyFpJKDFGG+Yg,tt3gxgqxak+7rDxte4XbAg,,,N,0,0,,,2013-11-05 11:09,2013-11-05 11:09,admin,admin,
25,101742,4512,26040,6590,0,N,N,N,CP_Drtn,TT_Task,DT_FixedDUR2,TK_NotStart,JF721.347,Fit-up,,352,0,32,0,0,0,32,0,0,0,,,,2012-10-18 12:00,2012-10-22 09:00,,2012-09-10 15:00,2012-09-13 17:00,2012-09-10 15:00,2012-09-13 17:00,2012-09-10 15:00,2012-09-13 17:00,2012-10-18 12:00,2012-10-22 09:00,,PT_Normal,,,,,WZg0KG7tHEKs8Wj3C2bRRA,+bPJdke39EC0UzUc8wEY4A,,,N,0,0,,,2013-11-05 11:09,2013-11-05 11:09,admin,admin,
26,101743,4512,26040,6590,0,N,N,N,CP_Drtn,TT_Task,DT_FixedDUR2,TK_NotStart,JF721.348,Welding,,352,0,32,0,0,0,32,0,0,0,,,,2012-10-19 12:30,2012-10-22 17:00,,2012-09-11 13:00,2012-09-15 10:00,2012-09-11 13:00,2012-09-15 10:00,2012-09-11 13:00,2012-09-15 10:00,2012-10-19 12:30,2012-10-22 17:00,,PT_Normal,,,,,gxmXPeSit0mEE/CMbQraqQ,BabspVpVGkKisBRG/u9JMw,,,N,0,0,,,2013-11-05 11:09,2013-11-05 11:09,admin,admin,
27,101744,4512,26040,6590,0,N,N,N,CP_Drtn,TT_Task,DT_FixedDUR2,TK_NotStart,JF721.349,Shop Blasting/Painting,,352,0,32,0,0,0,32,0,0,0,,,,2012-10-20 13:00,2012-10-23 15:00,,2012-09-12 11:00,2012-09-16 08:00,2012-09-12 11:00,2012-09-16 08:00,2012-09-12 11:00,2012-09-16 08:00,2012-10-20 13:00,2012-10-23 15:00,,PT_Normal,,,,,tQSIXrGhPkyGjisOa98qYQ,JgwK0VqNtkWPp1NEl6/QyA,,,N,0,0,,,2013-11-05 11:09,2013-11-05 11:09,admin,admin,
28,101745,4512,26040,6590,0,N,N,N,CP_Drtn,TT_Task,DT_FixedDUR2,TK_NotStart,JF721.350,Inspect & Accept for use,,352,0,24,0,0,0,24,0,0,0,,,,2012-10-23 15:00,2012-10-28 09:00,,2012-09-16 08:00,2012-09-18 12:00,2012-09-16 08:00,2012-09-18 12:00,2012-09-16 08:00,2012-09-18 12:00,2012-10-23 15:00,2012-10-28 09:00,,PT_Normal,,,,,yg0c5YHsWkm6rX7W9XTwKg,NIRxJhgScUO/HK/CeyoG5g,,,N,0,0,,,2013-11-05 11:09,2013-11-05 11:09,admin,admin,
29,101746,4512,26053,6590,0,N,N,N,CP_Drtn,TT_Task,DT_FixedDUR2,TK_NotStart,JF721.351,Define Layout,,800,0,32,0,0,0,32,0,0,0,,,,2012-12-05 14:00,2012-12-09 11:00,,2012-09-09 09:00,2012-09-12 11:00,2012-09-09 09:00,2012-09-12 11:00,2012-09-09 09:00,2012-09-12 11:00,2012-12-05 14:00,2012-12-09 11:00,,PT_Normal,,,,,KGkz+N8IQkW+vPet8LScrA,KvXnSNnJE0ebZGxmJ4g79A,,,N,0,0,,,2013-11-05 11:09,2013-11-05 11:09,admin,admin,
30,101747,4512,26053,6590,0,N,N,N,CP_Drtn,TT_Task,DT_FixedDUR2,TK_NotStart,JF721.352,Cutting,,800,0,40,0,0,0,40,0,0,0,,,,2012-12-05 14:00,2012-12-10 09:00,,2012-09-09 09:00,2012-09-13 09:00,2012-09-09 09:00,2012-09-13 09:00,2012-09-09 09:00,2012-09-13 09:00,2012-12-05 14:00,2012-12-10 09:00,,PT_Normal,,,,,7KmGrDWRuEm4JnzCVPno9A,HpEj9IuMTkSNMW2leNhO7Q,,,N,0,0,,,2013-11-05 11:09,2013-11-05 11:09,admin,admin,
31,101748,4512,26053,6590,0,N,N,N,CP_Drtn,TT_Task,DT_FixedDUR2,TK_NotStart,JF721.353,Bevelling/Rolling,,800,0,48,0,0,0,48,0,0,0,,,,2012-12-07 12:30,2012-12-12 13:00,,2012-09-10 15:00,2012-09-16 08:00,2012-09-10 15:00,2012-09-16 08:00,2012-09-10 15:00,2012-09-16 08:00,2012-12-07 12:30,2012-12-12 13:00,,PT_Normal,,,,,7XElssWX2UO13yevrxcZLg,cYzpiAMs+0KOa/HVaZX2AA,,,N,0,0,,,2013-11-05 11:09,2013-11-05 11:09,admin,admin,
32,101749,4512,26053,6590,0,N,N,N,CP_Drtn,TT_Task,DT_FixedDUR2,TK_NotStart,JF721.354,Shop Blasting/Painting,,800,0,48,0,0,0,48,0,0,0,,,,2012-12-10 09:00,2012-12-15 12:00,,2012-09-13 09:00,2012-09-18 12:00,2012-09-13 09:00,2012-09-18 12:00,2012-09-13 09:00,2012-09-18 12:00,2012-12-10 09:00,2012-12-15 12:00,,PT_Normal,,,,,7qRNWNf/BUi/ZMI5YlKORw,7HNi5PeaV0y2Y2hivMcf9w,,,N,0,0,,,2013-11-05 11:09,2013-11-05 11:09,admin,admin,
33,101750,4512,26053,6590,0,N,N,N,CP_Drtn,TT_Task,DT_FixedDUR2,TK_NotStart,JF721.355,Inspect & Accept for use,,800,0,32,0,0,0,32,0,0,0,,,,2012-12-15 12:00,2012-12-18 14:00,,2012-09-18 12:00,2012-09-22 09:00,2012-09-18 12:00,2012-09-22 09:00,2012-09-18 12:00,2012-09-22 09:00,2012-12-15 12:00,2012-12-18 14:00,,PT_Normal,,,,,gYidmF4U70WqW2W2/taBiQ,2GHiYf/TR0Koqh0FB+0+zg,,,N,0,0,,,2013-11-05 11:09,2013-11-05 11:09,admin,admin,
34,101751,4512,26038,6590,0,N,N,N,CP_Drtn,TT_Task,DT_FixedDUR2,TK_NotStart,JF721.356,Define layout,,1200,0,24,0,0,0,24,0,0,0,,,,2013-01-22 09:00,2013-01-24 13:00,,2012-09-13 09:00,2012-09-16 08:00,2012-09-13 09:00,2012-09-16 08:00,2012-09-13 09:00,2012-09-16 08:00,2013-01-22 09:00,2013-01-24 13:00,,PT_Normal,,,,,ukPIRYFgE0eFOJG7GaWArQ,BObSzZpwSEyt71E/AtUl6w,,,N,0,0,,,2013-11-05 11:09,2013-11-05 11:09,admin,admin,
35,101752,4512,26038,6590,0,N,N,N,CP_Drtn,TT_Task,DT_FixedDUR2,TK_NotStart,JF721.357,Cutting,,1200,0,32,0,0,0,32,0,0,0,,,,2013-01-24 13:00,2013-01-27 19:00,,2012-09-16 08:00,2012-09-19 10:00,2012-09-16 08:00,2012-09-19 10:00,2012-09-16 08:00,2012-09-19 10:00,2013-01-24 13:00,2013-01-27 19:00,,PT_Normal,,,,,hvnBElDZ80el4rELwryefg,AmRQTCoh50qjBmbNOJIlPA,,,N,0,0,,,2013-11-05 11:09,2013-11-05 11:09,admin,admin,
36,101753,4512,26038,6590,0,N,N,N,CP_Drtn,TT_Task,DT_FixedDUR2,TK_NotStart,JF721.358,Bevelling,,1200,0,40,0,0,0,40,0,0,0,,,,2013-01-25 13:30,2013-01-29 08:00,,2012-09-16 16:00,2012-09-20 16:00,2012-09-16 16:00,2012-09-20 16:00,2012-09-16 16:00,2012-09-20 16:00,2013-01-25 13:30,2013-01-29 08:00,,PT_Normal,,,,,0F8eWv3MVkOnnFX1DY3RWA,yFpHDPcaYUWOe29l70K2vw,,,N,0,0,,,2013-11-05 11:09,2013-11-05 11:09,admin,admin,
37,101754,4512,26038,6590,0,N,N,N,CP_Drtn,TT_Task,DT_FixedDUR2,TK_NotStart,JF721.359,Fit-up/Welding,,1200,0,48,0,0,0,48,0,0,0,,,,2013-01-27 11:00,2013-01-31 12:00,,2012-09-18 12:00,2012-09-23 15:00,2012-09-18 12:00,2012-09-23 15:00,2012-09-18 12:00,2012-09-23 15:00,2013-01-27 11:00,2013-01-31 12:00,,PT_Normal,,,,,Rrzrf/WA60WoE50Ew+Sr5Q,qSE5Fing/0mvKJhg5mIVeA,,,N,0,0,,,2013-11-05 11:09,2013-11-05 11:09,admin,admin,
38,101755,4512,26038,6590,0,N,N,N,CP_Drtn,TT_Task,DT_FixedDUR2,TK_NotStart,JF721.360,Blasting/Painting,,1200,0,56,0,0,0,56,0,0,0,,,,2013-01-29 08:00,2013-02-04 09:00,,2012-09-20 16:00,2012-09-26 17:00,2012-09-20 16:00,2012-09-26 17:00,2012-09-20 16:00,2012-09-26 17:00,2013-01-29 08:00,2013-02-04 09:00,,PT_Normal,,,,,sqHn8hnGWU+yZZQiATwqFA,P4/Fk4uRBEatogu64eu/Nw,,,N,0,0,,,2013-11-05 11:09,2013-11-05 11:09,admin,admin,
39,101756,4512,26038,6590,0,N,N,N,CP_Drtn,TT_Task,DT_FixedDUR2,TK_NotStart,JF721.361,Inspect & Accept for use,,1200,0,24,0,0,0,24,0,0,0,,,,2013-02-04 09:00,2013-02-06 13:00,,2012-09-27 07:00,2012-09-29 16:00,2012-09-27 07:00,2012-09-29 16:00,2012-09-27 07:00,2012-09-29 16:00,2013-02-04 09:00,2013-02-06 13:00,,PT_Normal,,,,,eQfShOfbuUq/qp1MibuY4A,mf4ZiKwzEkWAlgfh/a1UzQ,,,N,0,0,,,2013-11-05 11:09,2013-11-05 11:09,admin,admin,
40,101757,4512,26072,6590,0,N,N,N,CP_Drtn,TT_Task,DT_FixedDUR2,TK_NotStart,JF721.362,Define Layout,,1336,0,40,0,0,0,40,0,0,0,,,,2013-02-15 10:30,2013-02-19 13:00,,2012-09-23 15:00,2012-09-27 15:00,2012-09-23 15:00,2012-09-27 15:00,2012-09-23 15:00,2012-09-27 15:00,2013-02-15 10:30,2013-02-19 13:00,,PT_Normal,,,,,eIQ2UlKpf0WWkULxTtEgrA,4EwGlVvj1Euqj7jLBXyyvw,,,N,0,0,,,2013-11-05 11:09,2013-11-05 11:09,admin,admin,
41,101758,4512,26072,6590,0,N,N,N,CP_Drtn,TT_Task,DT_FixedDUR2,TK_NotStart,JF721.363,Cutting,,1336,0,56,0,0,0,56,0,0,0,,,,2013-02-19 13:00,2013-02-25 14:00,,2012-09-27 15:00,2012-10-03 16:00,2012-09-27 15:00,2012-10-03 16:00,2012-09-27 15:00,2012-10-03 16:00,2013-02-19 13:00,2013-02-25 14:00,,PT_Normal,,,,,OAQbYDzh/UyYnNIdLnsYNw,FnjnSPuQ8EGpxBoPL3gghg,,,N,0,0,,,2013-11-05 11:09,2013-11-05 11:09,admin,admin,
42,101759,4512,26072,6590,0,N,N,N,CP_Drtn,TT_Task,DT_FixedDUR2,TK_NotStart,JF721.364,Fit-Up,,1336,0,80,0,0,0,80,0,0,0,,,,2013-02-25 14:00,2013-03-06 09:00,,2012-10-03 16:00,2012-10-12 13:30,2012-10-03 16:00,2012-10-12 13:30,2012-10-03 16:00,2012-10-12 13:30,2013-02-25 14:00,2013-03-06 09:00,,PT_Normal,,,,,dcAdNgTmMUCCcFBHufcIuQ,2Avp9YRmPUmCASJKMgeCLg,,,N,0,0,,,2013-11-05 11:09,2013-11-05 11:09,admin,admin,
43,101760,4512,26072,6590,0,N,N,N,CP_Drtn,TT_Task,DT_FixedDUR2,TK_NotStart,JF721.365,Welding,,1336,0,56,0,0,0,56,0,0,0,,,,2013-03-06 09:00,2013-03-12 10:00,,2012-10-12 13:30,2012-10-18 12:00,2012-10-12 13:30,2012-10-18 12:00,2012-10-12 13:30,2012-10-18 12:00,2013-03-06 09:00,2013-03-12 10:00,,PT_Normal,,,,,nOcncG/DB0qBtXhSsYEntA,fKb7wQneJkSqokYzrd7Ntg,,,N,0,0,,,2013-11-05 11:09,2013-11-05 11:09,admin,admin,
44,101761,4512,26072,6590,0,N,N,N,CP_Drtn,TT_Task,DT_FixedDUR2,TK_NotStart,JF721.366,Blasting/Painting,,1336,0,56,0,0,0,56,0,0,0,,,,2013-03-12 10:00,2013-03-18 11:00,,2012-10-18 12:00,2012-10-24 13:00,2012-10-18 12:00,2012-10-24 13:00,2012-10-18 12:00,2012-10-24 13:00,2013-03-12 10:00,2013-03-18 11:00,,PT_Normal,,,,,CM6ov5m930uUExU8gxcGkQ,BwP2ymGIUU+c2fXN6sVgJg,,,N,0,0,,,2013-11-05 11:09,2013-11-05 11:09,admin,admin,
45,101762,4512,26072,6590,0,N,N,N,CP_Drtn,TT_Task,DT_FixedDUR2,TK_NotStart,JF721.367,Inspect & Accept for use,,1336,0,32,0,0,0,32,0,0,0,,,,2013-03-18 11:00,2013-03-21 13:00,,2012-10-24 13:00,2012-10-29 15:00,2012-10-24 13:00,2012-10-29 15:00,2012-10-24 13:00,2012-10-29 15:00,2013-03-18 11:00,2013-03-21 13:00,,PT_Normal,,,,,e4TxLWBzt0WfK+L8D3RHbg,o+wMiGtSoUKh2J48Anp8Dw,,,N,0,0,,,2013-11-05 11:09,2013-11-05 11:09,admin,admin,
46,101763,4512,26073,6590,0,N,N,N,CP_Drtn,TT_Task,DT_FixedDUR2,TK_NotStart,JF721.326,PO Issued,,480,0,24,0,0,0,24,0,0,0,,,,2012-09-03 08:00,2012-09-05 12:00,,2012-07-10 08:00,2012-07-12 12:00,2012-07-10 08:00,2012-07-12 12:00,2012-07-10 08:00,2012-07-12 12:00,2012-09-03 08:00,2012-09-05 12:00,,PT_Normal,,,,,8GQfg7cN3kacRT7kR0sKIQ,xMKajeOpB0i4h5bLtqRGTg,,,N,0,0,,,2013-11-05 11:09,2013-11-05 11:09,admin,admin,
47,101764,4512,26073,6590,0,N,N,N,CP_Drtn,TT_Task,DT_FixedDUR2,TK_NotStart,JF721.327,Ma'aden Site Delievery,,480,208,64,0,0,0,64,0,0,0,,,,2012-09-05 12:00,2012-09-12 11:00,,2012-07-12 12:00,2012-07-19 11:00,2012-07-12 12:00,2012-07-19 11:00,2012-07-12 12:00,2012-07-19 11:00,2012-09-05 12:00,2012-09-12 11:00,,PT_Normal,,,,,D20S4UKwpkOvnrg2AtdsUA,WxdmX0lSU0yS7+MyaW6J3A,,,N,0,0,,,2013-11-05 11:09,2013-11-05 11:09,admin,admin,
48,101765,4512,26115,6590,0,N,N,N,CP_Drtn,TT_Task,DT_FixedDUR2,TK_NotStart,JF721.368,"Annular,Bottom & Sump",,352,80,40,0,0,0,40,0,0,0,,,,2012-10-28 09:00,2012-11-01 09:00,,2012-09-18 12:00,2012-09-22 17:00,2012-09-18 12:00,2012-09-22 17:00,2012-09-18 12:00,2012-09-22 17:00,2012-10-28 09:00,2012-11-01 09:00,,PT_Normal,,,,,LI/kVgXxREyyrkFYingC9g,aL93bd7K20m30+6GK2mPUA,,,N,0,0,,,2013-11-05 11:09,2013-11-05 11:09,admin,admin,
49,101766,4512,26115,6590,0,N,N,N,CP_Drtn,TT_Task,DT_FixedDUR2,TK_NotStart,JF721.369,"Shell Courses #1,#2,#3,#4",,800,528,64,0,0,0,64,0,0,0,,,,2012-12-18 14:00,2012-12-25 13:00,,2012-09-22 09:00,2012-09-29 08:00,2012-09-22 09:00,2012-09-29 08:00,2012-09-22 09:00,2012-09-29 08:00,2012-12-18 14:00,2012-12-25 13:00,,PT_Normal,,,,,4irvQOVR4k2ZMqQEPz4c0g,mb+jkI/ywU6UywP62LUheA,,,N,0,0,,,2013-11-05 11:09,2013-11-05 11:09,admin,admin,
50,101767,4512,26115,6590,0,N,N,N,CP_Drtn,TT_Task,DT_FixedDUR2,TK_NotStart,JF721.370,Shell Nozzles & Manholes,,1200,928,48,0,0,0,48,0,0,0,,,,2013-02-06 13:00,2013-02-11 16:00,,2012-09-29 16:00,2012-10-04 14:00,2012-09-29 16:00,2012-10-04 14:00,2012-09-29 16:00,2012-10-04 14:00,2013-02-06 13:00,2013-02-11 16:00,,PT_Normal,,,,,6W742bH/KEmx/S2jf29JGw,bYPwWiI3GUaFTpFne1xHmA,,,N,0,0,,,2013-11-05 11:09,2013-11-05 11:09,admin,admin,
51,101768,4512,26115,6590,0,N,N,N,CP_Drtn,TT_Task,DT_FixedDUR2,TK_NotStart,JF721.371,"Platforms,Stairs & Handrails",,1336,1064,48,0,0,0,48,0,0,0,,,,2013-03-21 13:00,2013-03-26 16:00,,2012-10-29 15:00,2012-11-04 08:00,2012-10-29 15:00,2012-11-04 08:00,2012-10-29 15:00,2012-11-04 08:00,2013-03-21 13:00,2013-03-26 16:00,,PT_Normal,,,,,JAArtHZn4U+sSYTYSSoDYQ,dfbbgYeH70W47Yg9e8OhUw,,,N,0,0,,,2013-11-05 11:09,2013-11-05 11:09,admin,admin,
52,101769,4512,26115,6590,0,N,N,N,CP_Drtn,TT_Task,DT_FixedDUR2,TK_NotStart,JF721.372,Pipes & Fittings,,352,0,32,0,0,0,32,0,0,0,,,,2012-10-29 07:00,2012-11-01 09:00,,2012-09-19 10:00,2012-09-22 17:00,2012-09-19 10:00,2012-09-22 17:00,2012-09-19 10:00,2012-09-22 17:00,2012-10-29 07:00,2012-11-01 09:00,,PT_Normal,,,,,Jtqc12DB+ECecAIHQpSK2A,kpaaWoNQ0Ue6jietlQ5Z5Q,,,N,0,0,,,2013-11-05 11:09,2013-11-05 11:09,admin,admin,
53,101770,4512,26115,6590,0,N,N,N,CP_Drtn,TT_Task,DT_FixedDUR2,TK_NotStart,JF721.373,Aluminum Dome Roof,,1328,1056,736.016667,0,0,0,736.016667,0,0,0,,,,2013-01-14 12:00,2013-04-02 15:01,,2012-08-22 14:00,2012-11-11 15:01,2012-08-22 14:00,2012-11-11 15:01,2012-08-22 14:00,2012-11-11 15:01,2013-01-14 12:00,2013-04-02 15:01,,PT_Normal,,,,,wquGGi8jMkeATot9vXED0w,fvBVTZnUAEe8LmzFstdm6w,,,N,0,0,,,2013-11-05 11:09,2013-11-05 11:09,admin,admin,
54,101771,4512,26115,6590,0,N,N,N,CP_Drtn,TT_Task,DT_FixedDUR2,TK_NotStart,JF721.374,Paint Material,,680,328,32,0,0,0,32,0,0,0,,,,2012-10-29 07:00,2012-11-01 09:00,,2012-08-12 07:00,2012-08-15 09:00,2012-08-12 07:00,2012-08-15 09:00,2012-08-12 07:00,2012-08-15 09:00,2012-10-29 07:00,2012-11-01 09:00,,PT_Normal,,,,,ObgsxawGaEmE7lznsuBeMA,NMnPTBgk00ygxxX6Jhgwmg,,,N,0,0,,,2013-11-05 11:09,2013-11-05 11:09,admin,admin,
55,101772,4512,26075,6590,0,N,N,N,CP_Drtn,TT_FinMile,DT_FixedDrtn,TK_NotStart,3.5,"Material Requisition approval for Steel plates, Cathodic Protection, field instruments etc.",,352,0,0,0,0,0,0,0,0,0,,,,2012-09-06 10:00,2012-09-06 10:00,,2012-07-27 10:30,2012-07-27 10:30,2012-07-27 10:30,2012-07-27 10:30,2012-07-27 10:30,2012-07-27 10:30,2012-09-06 10:00,2012-09-06 10:00,,PT_Normal,,,,,2NaXrU3bpE6VUz0fzRiACQ,XHInUHFow0yLQJirCxHcjA,,,N,0,0,,,2013-11-05 11:09,2013-11-05 11:09,admin,admin,
56,101773,4512,26041,6590,0,N,N,N,CP_Drtn,TT_FinMile,DT_FixedDrtn,TK_NotStart,3.6,Purchase Order placement for Major Materials,,1328,0,0,0,0,0,0,0,0,0,,,,2013-01-14 12:00,2013-01-14 12:00,,2012-08-22 14:00,2012-08-22 14:00,2012-08-22 14:00,2012-08-22 14:00,2012-08-22 14:00,2012-08-22 14:00,2013-01-14 12:00,2013-01-14 12:00,,PT_Normal,,,,,YThpmUK1bUWK0FUOoCLqaQ,,,,N,0,0,,,2013-11-05 11:09,2013-11-05 11:09,admin,admin,
57,101774,4512,26055,6590,0,N,N,N,CP_Drtn,TT_FinMile,DT_FixedDrtn,TK_NotStart,3.11,Complete Installation of Cathodic Protection,,272,0,0,0,0,0,0,0,0,0,,,,2013-06-22 09:00,2013-06-22 09:00,,2013-05-23 12:00,2013-05-23 12:00,2013-05-23 12:00,2013-05-23 12:00,2013-05-23 12:00,2013-05-23 12:00,2013-06-22 09:00,2013-06-22 09:00,,PT_Normal,,,,,kDSxgkqKwkaV/UJWxpDJkA,,,,N,0,0,,,2013-11-05 11:09,2013-11-05 11:09,admin,admin,
58,101775,4512,26039,6590,0,N,N,N,CP_Drtn,TT_FinMile,DT_FixedDrtn,TK_NotStart,3.12,Complete Installation for instruments,,272,0,0,0,0,0,0,0,0,0,,,,2013-07-19 12:30,2013-07-19 12:30,,2013-06-20 08:00,2013-06-20 08:00,2013-06-20 08:00,2013-06-20 08:00,2013-06-20 08:00,2013-06-20 08:00,2013-07-19 12:30,2013-07-19 12:30,,PT_Normal,,,,,2XM/AlOw6UeVho4G8uPu5g,,,,N,0,0,,,2013-11-05 11:09,2013-11-05 11:09,admin,admin,
59,101776,4512,26043,6590,0,N,N,N,CP_Drtn,TT_FinMile,DT_FixedDrtn,TK_NotStart,3.8,Supply of materials to Site,,352,80,0,0,0,0,0,0,0,0,,,,2012-11-01 09:00,2012-11-01 09:00,,2012-09-22 17:00,2012-09-22 17:00,2012-09-22 17:00,2012-09-22 17:00,2012-09-22 17:00,2012-09-22 17:00,2012-11-01 09:00,2012-11-01 09:00,,PT_Normal,,,,,BaYTH6ss8EWvUgyZdYWBBA,,,,N,0,0,,,2013-11-05 11:09,2013-11-05 11:09,admin,admin,
60,101777,4512,26059,6590,0,N,N,N,CP_Drtn,TT_Task,DT_FixedDUR2,TK_NotStart,JF721.386,Erect & Weld Annular Plates,6942,272,0,120,0,1190,1190,120,420,0,420,,,,2012-11-01 09:00,2012-11-14 09:00,,2012-10-01 12:00,2012-10-14 12:00,2012-10-01 12:00,2012-10-14 12:00,2012-10-01 12:00,2012-10-14 12:00,2012-11-01 09:00,2012-11-14 09:00,,PT_Normal,,,,,DUtyFHo3mkauhxzMGJXiAQ,wAcsRKLcHkq/L3INr7lwpw,,,N,0,0,,,2013-11-05 11:09,2013-11-05 11:09,admin,admin,
61,101778,4512,26059,6590,0,N,N,N,CP_Drtn,TT_Task,DT_FixedDUR2,TK_NotStart,JF721.387,Erect & Tack Bottom Plates,6951,272,0,160,0,900,900,160,300,0,300,,,,2012-11-14 09:00,2012-12-01 14:00,,2012-10-14 12:00,2012-11-01 17:00,2012-10-14 12:00,2012-11-01 17:00,2012-10-14 12:00,2012-11-01 17:00,2012-11-14 09:00,2012-12-01 14:00,,PT_Normal,,,,,xI5B7XCZt0aBaVTo9Cf75g,110SImtgt0aH/kqL4icYqg,,,N,0,0,,,2013-11-05 11:09,2013-11-05 11:09,admin,admin,
62,101779,4512,26059,6590,0,N,N,N,CP_Drtn,TT_Task,DT_FixedDUR2,TK_NotStart,JF721.388,Welding of Bottom Plates,6968,272,0,200,0,980,980,200,630,0,630,,,,2012-12-01 14:00,2012-12-23 09:00,,2012-11-02 09:30,2012-11-23 14:30,2012-11-02 09:30,2012-11-23 14:30,2012-11-02 09:30,2012-11-23 14:30,2012-12-01 14:00,2012-12-23 09:00,,PT_Normal,,,,,Zz0uao7fGkCGk2UaSqltxw,zWD8t9dWWk6r42mM7S9ODg,,,N,0,0,,,2013-11-05 11:09,2013-11-05 11:09,admin,admin,
63,101780,4512,26059,6590,0,N,N,N,CP_Drtn,TT_Task,DT_FixedDUR2,TK_NotStart,JF721.389,Visual Inspection & Cleaning,6935,272,0,16,0,70,70,16,20,0,20,,,,2012-12-23 09:00,2012-12-24 15:00,,2012-11-24 07:00,2012-11-25 13:00,2012-11-24 07:00,2012-11-25 13:00,2012-11-24 07:00,2012-11-25 13:00,2012-12-23 09:00,2012-12-24 15:00,,PT_Normal,,,,,FZuyX+4o+0O2wJfLcODoWQ,stTKlzl250O8vdnn2608yQ,,,N,0,0,,,2013-11-05 11:09,2013-11-05 11:09,admin,admin,
64,101781,4512,26059,6590,0,N,N,N,CP_Drtn,TT_Task,DT_FixedDUR2,TK_NotStart,JF721.390,Carry Out NDT & Vaccuum Box Test,6935,272,0,24,0,180,180,24,40,0,40,,,,2012-12-24 15:00,2012-12-27 09:00,,2012-11-25 13:00,2012-11-27 17:00,2012-11-25 13:00,2012-11-27 17:00,2012-11-25 13:00,2012-11-27 17:00,2012-12-24 15:00,2012-12-27 09:00,,PT_Normal,,,,,PAj7Z2HVt0KZWTnRZRImNg,TJThdccDb02ykkVKXx6c/Q,,,N,0,0,,,2013-11-05 11:09,2013-11-05 11:09,admin,admin,
65,101782,4512,26060,6590,0,N,N,N,CP_Drtn,TT_Task,DT_FixedDUR2,TK_NotStart,JF721.391,Prepare Shell Course # 1 for Erection,6951,272,0,32,0,190,190,32,60,0,60,,,,2012-12-25 13:00,2012-12-29 10:00,,2012-11-26 11:00,2012-11-29 13:00,2012-11-26 11:00,2012-11-29 13:00,2012-11-26 11:00,2012-11-29 13:00,2012-12-25 13:00,2012-12-29 10:00,,PT_Normal,,,,,x3yzryMBI0OFvgHgS0QV4g,XgtPMJGhUk+gdCHLmZFEXA,,,N,0,0,,,2013-11-05 11:09,2013-11-05 11:09,admin,admin,
66,101783,4512,26060,6590,0,N,N,N,CP_Drtn,TT_Task,DT_FixedDUR2,TK_NotStart,JF721.392,Erect & Tack Shell Course # 1,6951,272,0,40,0,360,360,40,120,0,120,,,,2012-12-29 10:00,2013-01-02 10:00,,2012-11-29 13:00,2012-12-04 08:00,2012-11-29 13:00,2012-12-04 08:00,2012-11-29 13:00,2012-12-04 08:00,2012-12-29 10:00,2013-01-02 10:00,,PT_Normal,,,,,u9J3FzIz3UuJIe6YjBrdaA,lYIICyevK0KWhlRfcxgE9Q,,,N,0,0,,,2013-11-05 11:09,2013-11-05 11:09,admin,admin,
67,101784,4512,26060,6590,0,N,N,N,CP_Drtn,TT_Task,DT_FixedDUR2,TK_NotStart,JF721.393,Weld Outer Vertical Seam,6942,272,0,40,0,400,400,40,220,0,220,,,,2012-12-30 08:00,2013-01-03 08:00,,2012-11-30 13:30,2012-12-04 16:00,2012-11-30 13:30,2012-12-04 16:00,2012-11-30 13:30,2012-12-04 16:00,2012-12-30 08:00,2013-01-03 08:00,,PT_Normal,,,,,uSxZpbYW6EG22sS7PkGYeg,QZ+VUGcZFEqSWYekOyWirA,,,N,0,0,,,2013-11-05 11:09,2013-11-05 11:09,admin,admin,
68,101785,4512,26060,6590,0,N,N,N,CP_Drtn,TT_Task,DT_FixedDUR2,TK_NotStart,JF721.394,Backgouge & NDT Inside Vertical Seam,6965,272,0,40,0,200,200,40,40,0,40,,,,2012-12-30 16:00,2013-01-03 16:00,,2012-12-01 14:00,2012-12-05 14:00,2012-12-01 14:00,2012-12-05 14:00,2012-12-01 14:00,2012-12-05 14:00,2012-12-30 16:00,2013-01-03 16:00,,PT_Normal,,,,,WqajHkQIaEG18W0nm+FLbg,Oquglvz0g0+sTQlwVp+Mfg,,,N,0,0,,,2013-11-05 11:09,2013-11-05 11:09,admin,admin,
69,101786,4512,26060,6590,0,N,N,N,CP_Drtn,TT_Task,DT_FixedDUR2,TK_NotStart,JF721.395,Weld Inside Vertical Seam,6968,272,0,40,0,400,400,40,260,0,260,,,,2012-12-31 14:00,2013-01-05 09:00,,2012-12-02 12:00,2012-12-06 12:00,2012-12-02 12:00,2012-12-06 12:00,2012-12-02 12:00,2012-12-06 12:00,2012-12-31 14:00,2013-01-05 09:00,,PT_Normal,,,,,tzKtSd6xf0uayNn4oq5iwQ,bNgvLtxoF0WK2nioT03ing,,,N,0,0,,,2013-11-05 11:09,2013-11-05 11:09,admin,admin,
70,101787,4512,26061,6590,0,N,N,N,CP_Drtn,TT_Task,DT_FixedDUR2,TK_NotStart,JF721.396,Prepare Shell Course # 2 for Erection,6951,272,0,32,0,180,180,32,30,0,30,,,,2013-01-02 10:00,2013-01-05 17:00,,2012-12-04 08:00,2012-12-07 12:30,2012-12-04 08:00,2012-12-07 12:30,2012-12-04 08:00,2012-12-07 12:30,2013-01-02 10:00,2013-01-05 17:00,,PT_Normal,,,,,D5L+iJUCQEy8mMJrLTbH0A,znGT1AiRzUexYVr8dhKCng,,,N,0,0,,,2013-11-05 11:09,2013-11-05 11:09,admin,admin,
71,101788,4512,26061,6590,0,N,N,N,CP_Drtn,TT_Task,DT_FixedDUR2,TK_NotStart,JF721.397,Erect & Tack Shell Course # 2,6951,272,0,40,0,400,400,40,120,0,120,,,,2013-01-06 07:00,2013-01-09 17:00,,2012-12-07 12:30,2012-12-11 15:00,2012-12-07 12:30,2012-12-11 15:00,2012-12-07 12:30,2012-12-11 15:00,2013-01-06 07:00,2013-01-09 17:00,,PT_Normal,,,,,JdyeYUMUY0utDXkL9X9iBw,S0FZWc0Rh0uCp9rpJu0UFw,,,N,0,0,,,2013-11-05 11:09,2013-11-05 11:09,admin,admin,
72,101789,4512,26061,6590,0,N,N,N,CP_Drtn,TT_Task,DT_FixedDUR2,TK_NotStart,JF721.398,Weld Outer Vertical Seam,6935,272,0,48,0,840,840,48,480,0,480,,,,2013-01-06 15:00,2013-01-12 08:00,,2012-12-08 13:00,2012-12-13 11:00,2012-12-08 13:00,2012-12-13 11:00,2012-12-08 13:00,2012-12-13 11:00,2013-01-06 15:00,2013-01-12 08:00,,PT_Normal,,,,,4iHL7JUYjUSZH5b40npd1g,02x2RGlq8UyrSQ1smyHvXA,,,N,0,0,,,2013-11-05 11:09,2013-11-05 11:09,admin,admin,
73,101790,4512,26061,6590,0,N,N,N,CP_Drtn,TT_Task,DT_FixedDUR2,TK_NotStart,JF721.399,Backgouge & NDT Inside Vertical Seam,6964,272,0,40,0,260,260,40,40,0,40,,,,2013-01-07 13:00,2013-01-12 08:00,,2012-12-09 11:00,2012-12-13 11:00,2012-12-09 11:00,2012-12-13 11:00,2012-12-09 11:00,2012-12-13 11:00,2013-01-07 13:00,2013-01-12 08:00,,PT_Normal,,,,,f8E2PFfGRk+36QqbJYnsLw,OTH2MBl8/0+b90QwPRl6HA,,,N,0,0,,,2013-11-05 11:09,2013-11-05 11:09,admin,admin,
74,101791,4512,26061,6590,0,N,N,N,CP_Drtn,TT_Task,DT_FixedDUR2,TK_NotStart,JF721.400,Weld Inside Vertical Seam,6935,272,0,40,0,540,540,40,340,0,340,,,,2013-01-08 11:00,2013-01-12 16:00,,2012-12-10 09:00,2012-12-14 11:30,2012-12-10 09:00,2012-12-14 11:30,2012-12-10 09:00,2012-12-14 11:30,2013-01-08 11:00,2013-01-12 16:00,,PT_Normal,,,,,Kxn/+4NY8k6Dy5bQqa43zQ,RfSppuVpEkauvhzPvVlSOQ,,,N,0,0,,,2013-11-05 11:09,2013-11-05 11:09,admin,admin,
75,101792,4512,26061,6590,0,N,N,N,CP_Drtn,TT_Task,DT_FixedDUR2,TK_NotStart,JF721.401,"""""Fit & Tack Horizontal Seam between Shell Course # 1 & 2""""",6942,272,0,40,0,340,340,40,120,0,120,,,,2013-01-09 09:00,2013-01-13 14:00,,2012-12-11 07:00,2012-12-15 12:00,2012-12-11 07:00,2012-12-15 12:00,2012-12-11 07:00,2012-12-15 12:00,2013-01-09 09:00,2013-01-13 14:00,,PT_Normal,,,,,v2HZYEiRU0m9YKy7cXl6Lw,i+siZMRFOEWWPhpzGgTm/A,,,N,0,0,,,2013-11-05 11:09,2013-11-05 11:09,admin,admin,
76,101793,4512,26061,6590,0,N,N,N,CP_Drtn,TT_Task,DT_FixedDUR2,TK_NotStart,JF721.402,"""""Weld Outer Horizontal Seam between Shell Course # 1 & 2""""",6942,272,0,56,0,920,920,56,520,0,520,,,,2013-01-10 07:00,2013-01-16 08:00,,2012-12-11 15:00,2012-12-17 16:00,2012-12-11 15:00,2012-12-17 16:00,2012-12-11 15:00,2012-12-17 16:00,2013-01-10 07:00,2013-01-16 08:00,,PT_Normal,,,,,NwXTV+Ukv0aNN6dqHHWMuw,nmGtj9Je2EqNDoqQVv1N1g,,,N,0,0,,,2013-11-05 11:09,2013-11-05 11:09,admin,admin,
77,101794,4512,26061,6590,0,N,N,N,CP_Drtn,TT_Task,DT_FixedDUR2,TK_NotStart,JF721.403,"""""Backgouge & NDT Inside Horizontal Seam between Shell Course# 1 & 2""""",6935,272,0,40,0,280,280,40,40,0,40,,,,2013-01-10 15:00,2013-01-15 10:00,,2012-12-12 13:00,2012-12-17 08:00,2012-12-12 13:00,2012-12-17 08:00,2012-12-12 13:00,2012-12-17 08:00,2013-01-10 15:00,2013-01-15 10:00,,PT_Normal,,,,,74NK0Z7+rkSG9L9yV0lApA,sy+IrWUhXkughQFX+iL5XA,,,N,0,0,,,2013-11-05 11:09,2013-11-05 11:09,admin,admin,
78,101795,4512,26061,6590,0,N,N,N,CP_Drtn,TT_Task,DT_FixedDUR2,TK_NotStart,JF721.404,"Weld Inner Horizontal Seam between Shell Course # 1 & 2""""",6935,272,0,40,0,440,440,40,220,0,220,,,,2013-01-12 08:00,2013-01-16 08:00,,2012-12-13 11:00,2012-12-17 16:00,2012-12-13 11:00,2012-12-17 16:00,2012-12-13 11:00,2012-12-17 16:00,2013-01-12 08:00,2013-01-16 08:00,,PT_Normal,,,,,nuvQHFPyVk+TcPnsrKuCmg,V2cmtQD/9kqksXaVitT7Pg,,,N,0,0,,,2013-11-05 11:09,2013-11-05 11:09,admin,admin,
79,101796,4512,26048,6590,0,N,N,N,CP_Drtn,TT_Task,DT_FixedDUR2,TK_NotStart,JF721.405,Prepare Shell Course # 3 for Erection,6942,272,0,32,0,180,180,32,30,0,30,,,,2013-01-12 08:00,2013-01-15 10:00,,2012-12-13 11:00,2012-12-17 08:00,2012-12-13 11:00,2012-12-17 08:00,2012-12-13 11:00,2012-12-17 08:00,2013-01-12 08:00,2013-01-15 10:00,,PT_Normal,,,,,A3CnTNXkMEuTt27Qev1xXg,0dF8XEJAR0um2y0CtZrHCA,,,N,0,0,,,2013-11-05 11:09,2013-11-05 11:09,admin,admin,
80,101797,4512,26048,6590,0,N,N,N,CP_Drtn,TT_Task,DT_FixedDUR2,TK_NotStart,JF721.406,Erect & Tack Shell Course # 3,6951,272,0,40,0,340,340,40,100,0,100,,,,2013-01-15 10:00,2013-01-19 15:00,,2012-12-17 08:00,2012-12-21 10:30,2012-12-17 08:00,2012-12-21 10:30,2012-12-17 08:00,2012-12-21 10:30,2013-01-15 10:00,2013-01-19 15:00,,PT_Normal,,,,,rgAAJsqNkkiYEibBelu4vw,zAQOLeothkewiBEgPtyU3w,,,N,0,0,,,2013-11-05 11:09,2013-11-05 11:09,admin,admin,
81,101798,4512,26048,6590,0,N,N,N,CP_Drtn,TT_Task,DT_FixedDUR2,TK_NotStart,JF721.407,Weld Outer Vertical Seam,6965,272,0,48,0,540,540,48,330,0,330,,,,2013-01-16 08:00,2013-01-21 11:00,,2012-12-17 16:00,2012-12-23 09:00,2012-12-17 16:00,2012-12-23 09:00,2012-12-17 16:00,2012-12-23 09:00,2013-01-16 08:00,2013-01-21 11:00,,PT_Normal,,,,,ZdSFEHpNpEKIM3Q67hlJCQ,vwMCXD/taEyiVqs1zuTkSg,,,N,0,0,,,2013-11-05 11:09,2013-11-05 11:09,admin,admin,
82,101799,4512,26048,6590,0,N,N,N,CP_Drtn,TT_Task,DT_FixedDUR2,TK_NotStart,JF721.408,Backgouge & NDT Inside Vertical Seam,6942,272,0,40,0,180,180,40,40,0,40,,,,2013-01-16 16:00,2013-01-21 11:00,,2012-12-18 14:00,2012-12-23 09:00,2012-12-18 14:00,2012-12-23 09:00,2012-12-18 14:00,2012-12-23 09:00,2013-01-16 16:00,2013-01-21 11:00,,PT_Normal,,,,,vtsuaVhyHEW2zt52hcL+tw,FkRXA7HHrUuzrqNxnnIPWQ,,,N,0,0,,,2013-11-05 11:09,2013-11-05 11:09,admin,admin,
83,101800,4512,26048,6590,0,N,N,N,CP_Drtn,TT_Task,DT_FixedDUR2,TK_NotStart,JF721.409,Weld Inside Vertical Seam,6942,272,0,40,0,360,360,40,220,0,220,,,,2013-01-17 14:00,2013-01-22 09:00,,2012-12-19 12:00,2012-12-23 17:00,2012-12-19 12:00,2012-12-23 17:00,2012-12-19 12:00,2012-12-23 17:00,2013-01-17 14:00,2013-01-22 09:00,,PT_Normal,,,,,1CH14thr+0azjsabREaPEQ,Z68p+vy+CEihIDlquyT8Bw,,,N,0,0,,,2013-11-05 11:09,2013-11-05 11:09,admin,admin,
84,101801,4512,26048,6590,0,N,N,N,CP_Drtn,TT_Task,DT_FixedDUR2,TK_NotStart,JF721.410,"""""Fit & Tack Horizontal Seam between Shell Course # 2 & 3""""",6942,272,0,40,0,260,260,40,80,0,80,,,,2013-01-19 07:00,2013-01-22 17:00,,2012-12-20 10:00,2012-12-24 15:00,2012-12-20 10:00,2012-12-24 15:00,2012-12-20 10:00,2012-12-24 15:00,2013-01-19 07:00,2013-01-22 17:00,,PT_Normal,,,,,mhgXBXupWkSMVCCwL+K8vg,yO4QpAPPZUm/ZuKMLUlwxA,,,N,0,0,,,2013-11-05 11:09,2013-11-05 11:09,admin,admin,
85,101802,4512,26048,6590,0,N,N,N,CP_Drtn,TT_Task,DT_FixedDUR2,TK_NotStart,JF721.411,"""""Weld Outer Horizontal Seam between Shell Course # 2 & 3""""",6942,272,0,56,0,720,720,56,440,0,440,,,,2013-01-19 15:00,2013-01-25 13:30,,2012-12-21 10:30,2012-12-27 09:00,2012-12-21 10:30,2012-12-27 09:00,2012-12-21 10:30,2012-12-27 09:00,2013-01-19 15:00,2013-01-25 13:30,,PT_Normal,,,,,/i5p1337A0eOf+yoABaFng,FqAnNlhx/Uaj83WHY9IKxg,,,N,0,0,,,2013-11-05 11:09,2013-11-05 11:09,admin,admin,
86,101803,4512,26048,6590,0,N,N,N,CP_Drtn,TT_Task,DT_FixedDUR2,TK_NotStart,JF721.412,"""""Backgouge & NDT Inside Horizontal Seam between Shell Course# 2 & 3""""",6942,272,0,40,0,180,180,40,40,0,40,,,,2013-01-20 13:00,2013-01-24 13:00,,2012-12-22 11:00,2012-12-26 11:00,2012-12-22 11:00,2012-12-26 11:00,2012-12-22 11:00,2012-12-26 11:00,2013-01-20 13:00,2013-01-24 13:00,,PT_Normal,,,,,vAn94ViL70+Z5M+u37s0oA,9YqBeljKO0qZKYRZnZ9kzA,,,N,0,0,,,2013-11-05 11:09,2013-11-05 11:09,admin,admin,
87,101804,4512,26048,6590,0,N,N,N,CP_Drtn,TT_Task,DT_FixedDUR2,TK_NotStart,JF721.413,"Weld Inner Horizontal Seam between Shell Course # 2 & 3""""",6942,272,0,40,0,320,320,40,220,0,220,,,,2013-01-21 11:00,2013-01-25 13:30,,2012-12-23 09:00,2012-12-27 09:00,2012-12-23 09:00,2012-12-27 09:00,2012-12-23 09:00,2012-12-27 09:00,2013-01-21 11:00,2013-01-25 13:30,,PT_Normal,,,,,9P5BxE2vaUOdAZussiA0Ig,AYzaOzcC+0SVspGFh3omtg,,,N,0,0,,,2013-11-05 11:09,2013-11-05 11:09,admin,admin,
88,101805,4512,26063,6590,0,N,N,N,CP_Drtn,TT_Task,DT_FixedDUR2,TK_NotStart,JF721.414,Prepare Shell Course # 4 for Erection,6942,272,0,32,0,130,130,32,30,0,30,,,,2013-01-25 13:30,2013-01-28 10:00,,2012-12-27 09:00,2012-12-30 16:00,2012-12-27 09:00,2012-12-30 16:00,2012-12-27 09:00,2012-12-30 16:00,2013-01-25 13:30,2013-01-28 10:00,,PT_Normal,,,,,8Xk2odtBwkiHRg6tizxVzQ,Bh8dUtSXV0e+Ksnyty3PvQ,,,N,0,0,,,2013-11-05 11:09,2013-11-05 11:09,admin,admin,
89,101806,4512,26063,6590,0,N,N,N,CP_Drtn,TT_Task,DT_FixedDUR2,TK_NotStart,JF721.415,Erect & Tack Shell Course # 4,6965,272,0,40,0,300,300,40,120,0,120,,,,2013-01-28 10:00,2013-02-01 12:30,,2012-12-30 16:00,2013-01-03 16:00,2012-12-30 16:00,2013-01-03 16:00,2012-12-30 16:00,2013-01-03 16:00,2013-01-28 10:00,2013-02-01 12:30,,PT_Normal,,,,,fvkYskJ53U+80yvoog2yKw,FnpgCCzPpk6P25YAzjb7FA,,,N,0,0,,,2013-11-05 11:09,2013-11-05 11:09,admin,admin,
90,101807,4512,26063,6590,0,N,N,N,CP_Drtn,TT_Task,DT_FixedDUR2,TK_NotStart,JF721.416,Weld Outer Vertical Seam,6942,272,0,48,0,570,570,48,330,0,330,,,,2013-01-29 08:00,2013-02-03 11:00,,2012-12-31 14:00,2013-01-05 17:00,2012-12-31 14:00,2013-01-05 17:00,2012-12-31 14:00,2013-01-05 17:00,2013-01-29 08:00,2013-02-03 11:00,,PT_Normal,,,,,Y/gryKmFK0i9SCLscSFIGg,5cVgI51C00+1j2h27EgbEw,,,N,0,0,,,2013-11-05 11:09,2013-11-05 11:09,admin,admin,
91,101808,4512,26063,6590,0,N,N,N,CP_Drtn,TT_Task,DT_FixedDUR2,TK_NotStart,JF721.417,Backgouge & NDT Inside Vertical Seam,6942,272,0,40,0,200,200,40,40,0,40,,,,2013-01-29 16:00,2013-02-03 11:00,,2013-01-01 12:00,2013-01-05 17:00,2013-01-01 12:00,2013-01-05 17:00,2013-01-01 12:00,2013-01-05 17:00,2013-01-29 16:00,2013-02-03 11:00,,PT_Normal,,,,,BjHASCa2OEaD+8bDjsLS5w,oNcenL9t7kmxM4cI6cnKHA,,,N,0,0,,,2013-11-05 11:09,2013-11-05 11:09,admin,admin,
92,101809,4512,26063,6590,0,N,N,N,CP_Drtn,TT_Task,DT_FixedDUR2,TK_NotStart,JF721.418,Weld Inside Vertical Seam,6935,272,0,40,0,360,360,40,220,0,220,,,,2013-01-30 14:00,2013-02-04 09:00,,2013-01-02 10:00,2013-01-06 15:00,2013-01-02 10:00,2013-01-06 15:00,2013-01-02 10:00,2013-01-06 15:00,2013-01-30 14:00,2013-02-04 09:00,,PT_Normal,,,,,0AOYEMBS+EWi7/wc2t/pKg,AOO+KXYiykWoBvXrHLTISg,,,N,0,0,,,2013-11-05 11:09,2013-11-05 11:09,admin,admin,
93,101810,4512,26063,6590,0,N,N,N,CP_Drtn,TT_Task,DT_FixedDUR2,TK_NotStart,JF721.419,"""""Fit & Tack Horizontal Seam between Shell Course # 3 & 4""""",6942,272,0,40,0,260,260,40,100,0,100,,,,2013-01-31 12:00,2013-02-04 17:00,,2013-01-03 08:00,2013-01-07 13:00,2013-01-03 08:00,2013-01-07 13:00,2013-01-03 08:00,2013-01-07 13:00,2013-01-31 12:00,2013-02-04 17:00,,PT_Normal,,,,,dD1DLC/4u0eYfp220QyPoA,f+uNhvTdY0W8iTmTyN0P+Q,,,N,0,0,,,2013-11-05 11:09,2013-11-05 11:09,admin,admin,
94,101811,4512,26063,6590,0,N,N,N,CP_Drtn,TT_Task,DT_FixedDUR2,TK_NotStart,JF721.420,Weld Outer Horizontal Seam between Shell Course # 3 & 4,6942,272,0,56,0,680,680,56,440,0,440,,,,2013-02-01 12:30,2013-02-07 11:00,,2013-01-03 16:00,2013-01-09 17:00,2013-01-03 16:00,2013-01-09 17:00,2013-01-03 16:00,2013-01-09 17:00,2013-02-01 12:30,2013-02-07 11:00,,PT_Normal,,,,,cD6y+zHktkmWRlCmKCl82w,a4866ZCB9k6LY3zXWAxauA,,,N,0,0,,,2013-11-05 11:09,2013-11-05 11:09,admin,admin,
95,101812,4512,26063,6590,0,N,N,N,CP_Drtn,TT_Task,DT_FixedDUR2,TK_NotStart,JF721.421,"""""Backgouge & NDT Inside Horizontal Seam between Shell Course# 3 & 4""""",6942,272,0,40,0,180,180,40,40,0,40,,,,2013-02-02 13:00,2013-02-06 13:00,,2013-01-05 09:00,2013-01-09 09:00,2013-01-05 09:00,2013-01-09 09:00,2013-01-05 09:00,2013-01-09 09:00,2013-02-02 13:00,2013-02-06 13:00,,PT_Normal,,,,,Q/Qva6i6aEWGhmytslaaSw,oDIcQgrhIE2BT2X6ZhNrdw,,,N,0,0,,,2013-11-05 11:09,2013-11-05 11:09,admin,admin,
96,101813,4512,26063,6590,0,N,N,N,CP_Drtn,TT_Task,DT_FixedDUR2,TK_NotStart,JF721.422,"Weld Inner Horizontal Seam between Shell Course # 3 & 4""""",6942,272,0,40,0,340,340,40,220,0,220,,,,2013-02-03 11:00,2013-02-07 11:00,,2013-01-06 07:00,2013-01-09 17:00,2013-01-06 07:00,2013-01-09 17:00,2013-01-06 07:00,2013-01-09 17:00,2013-02-03 11:00,2013-02-07 11:00,,PT_Normal,,,,,b+4ChkJBMUyECbzoimkCRg,IlZcypqrkkiT7vWvdYTU7Q,,,N,0,0,,,2013-11-05 11:09,2013-11-05 11:09,admin,admin,
97,101814,4512,26063,6590,0,N,N,N,CP_Drtn,TT_Task,DT_FixedDUR2,TK_NotStart,JF721.423,"Fit, Weld Shell Course # 1 Annular Plate & Oil Test",6964,464,192,72,0,1860,1860,72,1020,0,1020,,,,2013-01-25 13:30,2013-02-01 12:30,,2012-12-06 12:00,2012-12-14 11:30,2012-12-06 12:00,2012-12-14 11:30,2012-12-06 12:00,2012-12-14 11:30,2013-01-25 13:30,2013-02-01 12:30,,PT_Normal,,,,,YdcHPBApOkGBuk6vWj+shQ,Hd3Cw6x4qkutEzo1wLhJHQ,,,N,0,0,,,2013-11-05 11:09,2013-11-05 11:09,admin,admin,
98,101815,4512,26086,6590,0,N,N,N,CP_Drtn,TT_Task,DT_FixedDUR2,TK_NotStart,JF721.424,Erect & Tack Curve Angle,6942,272,0,40,0,220,220,40,100,0,100,,,,2013-02-07 11:00,2013-02-11 16:00,,2013-01-10 07:00,2013-01-14 12:00,2013-01-10 07:00,2013-01-14 12:00,2013-01-10 07:00,2013-01-14 12:00,2013-02-07 11:00,2013-02-11 16:00,,PT_Normal,,,,,9Z483/xXski49dNB+nuEsA,4LEEoOCuY0O9LxelhKylNA,,,N,0,0,,,2013-11-05 11:09,2013-11-05 11:09,admin,admin,
99,101816,4512,26086,6590,0,N,N,N,CP_Drtn,TT_Task,DT_FixedDUR2,TK_NotStart,JF721.425,Weld Curve Angle,6942,272,0,56,0,560,560,56,320,0,320,,,,2013-02-11 16:00,2013-02-17 17:00,,2013-01-14 12:00,2013-01-20 13:00,2013-01-14 12:00,2013-01-20 13:00,2013-01-14 12:00,2013-01-20 13:00,2013-02-11 16:00,2013-02-17 17:00,,PT_Normal,,,,,hMT18gUxNkGTQw0OY9xzAw,mDvr2ryoH02BSTFTlZLUXg,,,N,0,0,,,2013-11-05 11:09,2013-11-05 11:09,admin,admin,
100,101817,4512,26087,6590,0,N,N,N,CP_Drtn,TT_Task,DT_FixedDUR2,TK_NotStart,JF721.426,MArk & Cut Holes,6964,272,0,48,0,300,300,48,90,0,90,,,,2013-02-11 16:00,2013-02-17 09:00,,2013-01-14 12:00,2013-01-19 15:00,2013-01-14 12:00,2013-01-19 15:00,2013-01-14 12:00,2013-01-19 15:00,2013-02-11 16:00,2013-02-17 09:00,,PT_Normal,,,,,OVpuH2sYlUmo1R01FRZ+Ig,KIGGf/WnD0ed22oKzp2sxw,,,N,0,0,,,2013-11-05 11:09,2013-11-05 11:09,admin,admin,
101,101818,4512,26087,6590,0,N,N,N,CP_Drtn,TT_Task,DT_FixedDUR2,TK_NotStart,JF721.427,"Fit & Tack Manholes ,Nozzles on Shell",6958,272,0,40,0,180,180,40,80,0,80,,,,2013-02-12 14:00,2013-02-17 09:00,,2013-01-15 10:00,2013-01-19 15:00,2013-01-15 10:00,2013-01-19 15:00,2013-01-15 10:00,2013-01-19 15:00,2013-02-12 14:00,2013-02-17 09:00,,PT_Normal,,,,,FrLk39f8MkixWAH0wDmXgA,rBcnUlW/60y/LAaEBzsSMw,,,N,0,0,,,2013-11-05 11:09,2013-11-05 11:09,admin,admin,
102,101819,4512,26087,6590,0,N,N,N,CP_Drtn,TT_Task,DT_FixedDUR2,TK_NotStart,JF721.428,Weld MAnholes & Nozzles on shell,6968,272,0,40,0,280,280,40,210,0,210,,,,2013-02-13 12:00,2013-02-17 17:00,,2013-01-16 08:00,2013-01-20 13:00,2013-01-16 08:00,2013-01-20 13:00,2013-01-16 08:00,2013-01-20 13:00,2013-02-13 12:00,2013-02-17 17:00,,PT_Normal,,,,,oecm1z/R8UWGBbAvLvLDXg,0KCSGwJNKU+tT+/YmtgeGA,,,N,0,0,,,2013-11-05 11:09,2013-11-05 11:09,admin,admin,
103,101820,4512,26087,6590,0,N,N,N,CP_Drtn,TT_Task,DT_FixedDUR2,TK_NotStart,JF721.429,NDT on Manholes & Nozzles on shell,6964,272,0,32,0,70,70,32,20,0,20,,,,2013-02-18 07:00,2013-02-21 09:00,,2013-01-20 13:00,2013-01-23 15:00,2013-01-20 13:00,2013-01-23 15:00,2013-01-20 13:00,2013-01-23 15:00,2013-02-18 07:00,2013-02-21 09:00,,PT_Normal,,,,,A/pGT2Y5k0u+YdEKW41K9g,8EilY1U3706EfnCqsOoftw,,,N,0,0,,,2013-11-05 11:09,2013-11-05 11:09,admin,admin,
104,101821,4512,26047,6590,0,N,N,N,CP_Drtn,TT_Task,DT_FixedDUR2,TK_NotStart,JF721.430,Prepare Tank for Roof Contruction,6914,272,0,40,0,276,276,40,60,0,60,,,,2013-02-21 09:00,2013-02-25 14:00,,2013-01-23 15:00,2013-01-27 19:00,2013-01-23 15:00,2013-01-27 19:00,2013-01-23 15:00,2013-01-27 19:00,2013-02-21 09:00,2013-02-25 14:00,,PT_Normal,,,,,pzsVi1nZaUOLwXHvUUOGhQ,lRS00tchZkqxfqnwTzxvGA,,,N,0,0,,,2013-11-05 11:09,2013-11-05 11:09,admin,admin,
105,101822,4512,26047,6590,0,N,N,N,CP_Drtn,TT_Task,DT_FixedDUR2,TK_NotStart,JF721.431,Install Shoe Support Structure on Shell,6964,272,0,56,0,700,700,56,240,0,240,,,,2013-02-25 14:00,2013-03-03 15:00,,2013-01-27 19:00,2013-02-02 13:00,2013-01-27 19:00,2013-02-02 13:00,2013-01-27 19:00,2013-02-02 13:00,2013-02-25 14:00,2013-03-03 15:00,,PT_Normal,,,,,QSMuDotwmUGU0liBlVGheg,PbQ/co29dU+izHYm3twr6w,,,N,0,0,,,2013-11-05 11:09,2013-11-05 11:09,admin,admin,
106,101823,4512,26047,6590,0,N,N,N,CP_Drtn,TT_Task,DT_FixedDUR2,TK_NotStart,JF721.432,Install / Assemble Roof Rafters,6951,272,0,104,0,1600,1600,104,300,0,300,,,,2013-03-03 15:00,2013-03-14 14:00,,2013-02-02 13:00,2013-02-13 12:00,2013-02-02 13:00,2013-02-13 12:00,2013-02-02 13:00,2013-02-13 12:00,2013-03-03 15:00,2013-03-14 14:00,,PT_Normal,,,,,wiGMaNIvnkC+bavsFIMrFA,iIFBqAUwnkSEFCiOSVgkJQ,,,N,0,0,,,2013-11-05 11:09,2013-11-05 11:09,admin,admin,
107,101824,4512,26047,6590,0,N,N,N,CP_Drtn,TT_Task,DT_FixedDUR2,TK_NotStart,JF721.433,Installation of Roof Plates,6914,272,0,72,0,900,900,72,180,0,180,,,,2013-03-14 14:00,2013-03-22 13:30,,2013-02-13 12:00,2013-02-21 09:00,2013-02-13 12:00,2013-02-21 09:00,2013-02-13 12:00,2013-02-21 09:00,2013-03-14 14:00,2013-03-22 13:30,,PT_Normal,,,,,2lCL96ZIr0mdRXOL8eGDVw,AzMvPn6voEGP9yR3lyt++Q,,,N,0,0,,,2013-11-05 11:09,2013-11-05 11:09,admin,admin,
108,101825,4512,26047,6590,0,N,N,N,CP_Drtn,TT_Task,DT_FixedDUR2,TK_NotStart,JF721.434,Install Roof Manholes & Nozzles,6942,272,0,40,0,300,300,40,60,0,60,,,,2013-03-22 13:30,2013-03-26 16:00,,2013-02-21 09:00,2013-02-25 14:00,2013-02-21 09:00,2013-02-25 14:00,2013-02-21 09:00,2013-02-25 14:00,2013-03-22 13:30,2013-03-26 16:00,,PT_Normal,,,,,ZHpdMiGfVE215m4RaGM2ZQ,XyLBxpvVO02nLeXXA/6jWA,,,N,0,0,,,2013-11-05 11:09,2013-11-05 11:09,admin,admin,
109,101826,4512,26089,6590,0,N,N,N,CP_Drtn,TT_Task,DT_FixedDUR2,TK_NotStart,JF721.435,"Erect & Fix Stairs, Handrails & Platforms on Shell",6942,272,0,24,0,340,340,24,60,0,60,,,,2013-03-26 16:00,2013-03-29 12:30,,2013-02-25 14:00,2013-02-28 08:00,2013-02-25 14:00,2013-02-28 08:00,2013-02-25 14:00,2013-02-28 08:00,2013-03-26 16:00,2013-03-29 12:30,,PT_Normal,,,,,3hPpR+/ED0q/lo+G5S3mlQ,5EyPUwMeTEmEfhHgV6rOaQ,,,N,0,0,,,2013-11-05 11:09,2013-11-05 11:09,admin,admin,
110,101827,4512,26089,6590,0,N,N,N,CP_Drtn,TT_Task,DT_FixedDUR2,TK_NotStart,JF721.436,Erect & Fix Roof Platforms & Handrails,6942,272,0,32,0,510,510,32,90,0,90,,,,2013-03-26 16:00,2013-03-30 13:00,,2013-02-25 14:00,2013-02-28 16:00,2013-02-25 14:00,2013-02-28 16:00,2013-02-25 14:00,2013-02-28 16:00,2013-03-26 16:00,2013-03-30 13:00,,PT_Normal,,,,,i37Fnht8lUSqdnJS4Bt+Lw,Lb5PVGvsWk2o3r/VbRiomA,,,N,0,0,,,2013-11-05 11:09,2013-11-05 11:09,admin,admin,
111,101828,4512,26049,6590,0,N,N,N,CP_Drtn,TT_Task,DT_FixedDUR2,TK_NotStart,JF721.437,Install Blind Flanges,6965,272,0,16,0,150,150,16,20,0,20,,,,2013-03-30 13:00,2013-04-01 09:00,,2013-02-28 16:00,2013-03-02 17:00,2013-02-28 16:00,2013-03-02 17:00,2013-02-28 16:00,2013-03-02 17:00,2013-03-30 13:00,2013-04-01 09:00,,PT_Normal,,,,,k93gWecieEmbCwrMcptmCw,bansJdM3X0yoUVEYaMB/xw,,,N,0,0,,,2013-11-05 11:09,2013-11-05 11:09,admin,admin,
112,101829,4512,26049,6590,0,N,N,N,CP_Drtn,TT_Task,DT_FixedDUR2,TK_NotStart,JF721.438,Tank Water Filling,6965,272,0,176,0,2080,2080,176,780,0,780,,,,2013-04-01 09:00,2013-04-20 10:00,,2013-03-03 07:00,2013-03-21 13:00,2013-03-03 07:00,2013-03-21 13:00,2013-03-03 07:00,2013-03-21 13:00,2013-04-01 09:00,2013-04-20 10:00,,PT_Normal,,,,,keyZPoU9PUmHXnRAaVVeVg,Kh4mzvRJ7U6puAbF5H7xpQ,,,N,0,0,,,2013-11-05 11:09,2013-11-05 11:09,admin,admin,
113,101830,4512,26049,6590,0,N,N,N,CP_Drtn,TT_Task,DT_FixedDUR2,TK_NotStart,JF721.439,Hold Water for 48 Hours,6965,272,0,24,0,120,120,24,40,0,40,,,,2013-04-20 10:00,2013-04-22 14:00,,2013-03-21 13:00,2013-03-24 12:00,2013-03-21 13:00,2013-03-24 12:00,2013-03-21 13:00,2013-03-24 12:00,2013-04-20 10:00,2013-04-22 14:00,,PT_Normal,,,,,gU8nGrlK3EmFftefLbemmQ,Hztw/9W0LUmVyvntp0hYYQ,,,N,0,0,,,2013-11-05 11:09,2013-11-05 11:09,admin,admin,
114,101831,4512,26049,6590,0,N,N,N,CP_Drtn,TT_Task,DT_FixedDUR2,TK_NotStart,JF721.440,Drain Water from Tank,6965,360,0,32,0,1650,1650,32,300,0,300,,,,2013-05-02 07:00,2013-05-05 14:00,,2013-03-24 12:00,2013-03-27 14:00,2013-03-24 12:00,2013-03-27 14:00,2013-03-24 12:00,2013-03-27 14:00,2013-05-02 07:00,2013-05-05 14:00,,PT_Normal,,,,,NQaGyZUCVE+hsA5lWNDr7w,TICNOBkmHEGq2yaXZRVaLA,,,N,0,0,,,2013-11-05 11:09,2013-11-05 11:09,admin,admin,
115,101832,4512,26049,6590,0,N,N,N,CP_Drtn,TT_Task,DT_FixedDUR2,TK_NotStart,JF721.441,Clean & Dry Out Tank,6942,360,0,16,0,390,390,16,60,0,60,,,,2013-05-05 14:00,2013-05-07 10:00,,2013-03-27 14:00,2013-03-29 12:30,2013-03-27 14:00,2013-03-29 12:30,2013-03-27 14:00,2013-03-29 12:30,2013-05-05 14:00,2013-05-07 10:00,,PT_Normal,,,,,SUgWFq3QnUOdsZPVYgmNGw,U7W2RDXctU2pKuHyUnEDrg,,,N,0,0,,,2013-11-05 11:09,2013-11-05 11:09,admin,admin,
116,101833,4512,26050,6590,0,N,N,N,CP_Drtn,TT_Task,DT_FixedDUR2,TK_NotStart,JF721.442,Erect  Scafolding Outside Tank,6942,272,0,72,0,960,960,72,160,0,160,,,,2013-04-22 14:00,2013-04-30 11:00,,2013-03-24 12:00,2013-04-01 09:00,2013-03-24 12:00,2013-04-01 09:00,2013-03-24 12:00,2013-04-01 09:00,2013-04-22 14:00,2013-04-30 11:00,,PT_Normal,,,,,Xx6gPqgGA0Kk+5W8607y6A,NX0HJySfA0ee8dax3nEcVw,,,N,0,0,,,2013-11-05 11:09,2013-11-05 11:09,admin,admin,
117,101834,4512,26050,6590,0,N,N,N,CP_Drtn,TT_Task,DT_FixedDUR2,TK_NotStart,JF721.443,External Shell Blast & Prime,6950,272,0,40,0,640,640,40,80,0,80,,,,2013-04-30 11:00,2013-05-04 16:00,,2013-04-01 09:00,2013-04-05 11:30,2013-04-01 09:00,2013-04-05 11:30,2013-04-01 09:00,2013-04-05 11:30,2013-04-30 11:00,2013-05-04 16:00,,PT_Normal,,,,,y2t7JTyUmkOIXfgG8xb/6A,pmfMQhFbCk2DnuEWFOOGgw,,,N,0,0,,,2013-11-05 11:09,2013-11-05 11:09,admin,admin,
118,101835,4512,26050,6590,0,N,N,N,CP_Drtn,TT_Task,DT_FixedDUR2,TK_NotStart,JF721.444,External Shell Secondary & Final Coat,6965,272,0,40,0,600,600,40,80,0,80,,,,2013-05-01 09:00,2013-05-05 14:00,,2013-04-02 07:00,2013-04-06 12:00,2013-04-02 07:00,2013-04-06 12:00,2013-04-02 07:00,2013-04-06 12:00,2013-05-01 09:00,2013-05-05 14:00,,PT_Normal,,,,,wNCwQ+WNM0iIR9lE3nkNJw,LrXrl8VuZUKaDkTnCorn2w,,,N,0,0,,,2013-11-05 11:09,2013-11-05 11:09,admin,admin,
119,101836,4512,26050,6590,0,N,N,N,CP_Drtn,TT_Task,DT_FixedDUR2,TK_NotStart,JF721.445,External Shell Paint Inspection,6935,272,0,16,0,140,140,16,20,0,20,,,,2013-05-05 14:00,2013-05-07 10:00,,2013-04-06 12:00,2013-04-08 08:00,2013-04-06 12:00,2013-04-08 08:00,2013-04-06 12:00,2013-04-08 08:00,2013-05-05 14:00,2013-05-07 10:00,,PT_Normal,,,,,eyaHI3mFSUu0lOo6nsny9w,zNCSE9hsPU+w0PbWL4y0RQ,,,N,0,0,,,2013-11-05 11:09,2013-11-05 11:09,admin,admin,
120,101837,4512,26050,6590,0,N,N,N,CP_Drtn,TT_Task,DT_FixedDUR2,TK_NotStart,JF721.446,Dismantle External Scaffolding,6957,272,0,24,0,260,260,24,40,0,40,,,,2013-05-07 10:00,2013-05-09 14:00,,2013-04-08 08:00,2013-04-10 12:00,2013-04-08 08:00,2013-04-10 12:00,2013-04-08 08:00,2013-04-10 12:00,2013-05-07 10:00,2013-05-09 14:00,,PT_Normal,,,,,ue/fahiRaUSZlHus2Mt+sA,h8ZTaHGim0WHe47851X01g,,,N,0,0,,,2013-11-05 11:09,2013-11-05 11:09,admin,admin,
121,101838,4512,26051,6590,0,N,N,N,CP_Drtn,TT_Task,DT_FixedDUR2,TK_NotStart,JF721.447,Erect Scafolding Inside Tank,6942,360,88,56,0,980,980,56,120,0,120,,,,2013-05-07 10:00,2013-05-13 11:00,,2013-03-29 12:30,2013-04-04 11:00,2013-03-29 12:30,2013-04-04 11:00,2013-03-29 12:30,2013-04-04 11:00,2013-05-07 10:00,2013-05-13 11:00,,PT_Normal,,,,,TnUtr2kiRE+AUWOVw7FPaQ,vidy906DS0uiEq9Jcg/PUg,,,N,0,0,,,2013-11-05 11:09,2013-11-05 11:09,admin,admin,
122,101839,4512,26051,6590,0,N,N,N,CP_Drtn,TT_Task,DT_FixedDUR2,TK_NotStart,JF721.448,Internal Shell Blast & Prime,6949,272,0,32,0,420,420,32,60,0,60,,,,2013-05-09 14:00,2013-05-13 11:00,,2013-04-10 12:00,2013-04-14 09:00,2013-04-10 12:00,2013-04-14 09:00,2013-04-10 12:00,2013-04-14 09:00,2013-05-09 14:00,2013-05-13 11:00,,PT_Normal,,,,,riIDlBiDs0mdqErBpLbR7A,EcDxdvHaBEGzZrj34KuDLw,,,N,0,0,,,2013-11-05 11:09,2013-11-05 11:09,admin,admin,
123,101840,4512,26051,6590,0,N,N,N,CP_Drtn,TT_Task,DT_FixedDUR2,TK_NotStart,JF721.449,Internal Shell Secondary & Final Coat,6950,272,0,32,0,420,420,32,60,0,60,,,,2013-05-13 11:00,2013-05-16 13:00,,2013-04-14 09:00,2013-04-17 11:00,2013-04-14 09:00,2013-04-17 11:00,2013-04-14 09:00,2013-04-17 11:00,2013-05-13 11:00,2013-05-16 13:00,,PT_Normal,,,,,PTToFcKBVEaFVasqRDmoag,wZGqCHL8t0WnxIy/M/19Uw,,,N,0,0,,,2013-11-05 11:09,2013-11-05 11:09,admin,admin,
124,101841,4512,26051,6590,0,N,N,N,CP_Drtn,TT_Task,DT_FixedDUR2,TK_NotStart,JF721.450,Internal Shell Paint Inspection,6967,272,0,16,0,50,50,16,20,0,20,,,,2013-05-13 11:00,2013-05-14 17:00,,2013-04-14 09:00,2013-04-15 15:00,2013-04-14 09:00,2013-04-15 15:00,2013-04-14 09:00,2013-04-15 15:00,2013-05-13 11:00,2013-05-14 17:00,,PT_Normal,,,,,9u9P/swACUqgPlFBuLexJw,y9fO7Scg7E+e7C945Imudw,,,N,0,0,,,2013-11-05 11:09,2013-11-05 11:09,admin,admin,
125,101842,4512,26051,6590,0,N,N,N,CP_Drtn,TT_Task,DT_FixedDUR2,TK_NotStart,JF721.451,Dismantle Internal Scaffolding,6942,272,0,40,0,520,520,40,80,0,80,,,,2013-05-15 07:00,2013-05-19 12:00,,2013-04-15 15:00,2013-04-20 10:00,2013-04-15 15:00,2013-04-20 10:00,2013-04-15 15:00,2013-04-20 10:00,2013-05-15 07:00,2013-05-19 12:00,,PT_Normal,,,,,w9MxThft3Ee0tJouGrVM2Q,yu9LhqdEMkmwT1t857x5Tw,,,N,0,0,,,2013-11-05 11:09,2013-11-05 11:09,admin,admin,
126,101843,4512,26051,6590,0,N,N,N,CP_Drtn,TT_Task,DT_FixedDUR2,TK_NotStart,JF721.452,Bottom/Annular Plate Blast & Prime,6949,272,0,24,0,240,240,24,40,0,40,,,,2013-05-19 12:00,2013-05-21 16:00,,2013-04-20 10:00,2013-04-22 14:00,2013-04-20 10:00,2013-04-22 14:00,2013-04-20 10:00,2013-04-22 14:00,2013-05-19 12:00,2013-05-21 16:00,,PT_Normal,,,,,BsulDpNAnUChJ/mq1Titkg,DbN3WnOHDECoEhhms9W2Yg,,,N,0,0,,,2013-11-05 11:09,2013-11-05 11:09,admin,admin,
127,101844,4512,26051,6590,0,N,N,N,CP_Drtn,TT_Task,DT_FixedDUR2,TK_NotStart,JF721.453,Bottom/Annular Plate Secondary & Final Coat,6950,272,0,24,0,220,220,24,40,0,40,,,,2013-05-21 16:00,2013-05-24 12:30,,2013-04-22 14:00,2013-04-25 08:00,2013-04-22 14:00,2013-04-25 08:00,2013-04-22 14:00,2013-04-25 08:00,2013-05-21 16:00,2013-05-24 12:30,,PT_Normal,,,,,Gcw8lIGMlE2TL+X12wL/uA,5jQfhNzf/Uq3OARytNb6qw,,,N,0,0,,,2013-11-05 11:09,2013-11-05 11:09,admin,admin,
128,101845,4512,26051,6590,0,N,N,N,CP_Drtn,TT_Task,DT_FixedDUR2,TK_NotStart,JF721.454,Bottom/Annular Plate Paint Inspection,6942,272,0,16,0,50,50,16,20,0,20,,,,2013-05-24 12:30,2013-05-26 11:00,,2013-04-25 08:00,2013-04-27 09:00,2013-04-25 08:00,2013-04-27 09:00,2013-04-25 08:00,2013-04-27 09:00,2013-05-24 12:30,2013-05-26 11:00,,PT_Normal,,,,,G74EdeYeZkiP0F7To30GYA,t2L8aWgy5kSdkuqtYptyaw,,,N,0,0,,,2013-11-05 11:09,2013-11-05 11:09,admin,admin,
129,101846,4512,26052,6590,0,N,N,N,CP_Drtn,TT_Task,DT_FixedDUR2,TK_NotStart,JF721.455,Tanks lighting,6942,272,0,24,0,200,200,24,80,0,80,,,,2013-07-19 12:30,2013-07-22 09:00,,2013-06-20 08:00,2013-06-22 17:00,2013-06-20 08:00,2013-06-22 17:00,2013-06-20 08:00,2013-06-22 17:00,2013-07-19 12:30,2013-07-22 09:00,,PT_Normal,,,,,bsDqW/4At0yu4W0Kgj5x4w,7y5Qe1s210qmT+OEF38g9A,,,N,0,0,,,2013-11-05 11:09,2013-11-05 11:09,admin,admin,
130,101847,4512,26052,6590,0,N,N,N,CP_Drtn,TT_Task,DT_FixedDUR2,TK_NotStart,JF721.456,Tanks lighting  protection,6942,272,0,24,0,180,180,24,80,0,80,,,,2013-07-22 09:00,2013-07-24 13:00,,2013-06-23 07:00,2013-06-25 11:00,2013-06-23 07:00,2013-06-25 11:00,2013-06-23 07:00,2013-06-25 11:00,2013-07-22 09:00,2013-07-24 13:00,,PT_Normal,,,,,UxNBqB7YwUKA7v1CaDw8pA,DDo+Xv7R+k66PRF1lFqpDQ,,,N,0,0,,,2013-11-05 11:09,2013-11-05 11:09,admin,admin,
131,101848,4512,26052,6590,0,N,N,N,CP_Drtn,TT_Task,DT_FixedDUR2,TK_NotStart,JF721.457,Grounding system,6942,272,0,24,0,140,140,24,40,0,40,,,,2013-07-24 13:00,2013-07-27 12:00,,2013-06-25 11:00,2013-06-27 15:00,2013-06-25 11:00,2013-06-27 15:00,2013-06-25 11:00,2013-06-27 15:00,2013-07-24 13:00,2013-07-27 12:00,,PT_Normal,,,,,Y39coO9bUkeapT/pvpKVWg,AdBUkj8+oEi0Eo2JeQDOPQ,,,N,0,0,,,2013-11-05 11:09,2013-11-05 11:09,admin,admin,
132,101849,4512,26094,6590,0,N,N,N,CP_Drtn,TT_Task,DT_FixedDUR2,TK_NotStart,JF721.458,Concrete testing,6916,272,0,32,0,210,210,32,60,0,60,,,,2013-07-27 12:00,2013-07-30 14:00,,2013-06-27 15:00,2013-07-01 12:00,2013-06-27 15:00,2013-07-01 12:00,2013-06-27 15:00,2013-07-01 12:00,2013-07-27 12:00,2013-07-30 14:00,,PT_Normal,,,,,bC/1pwPOHU+OuTcfpez4dg,6ft2cTrvvkS3JbzQ3DAeBg,,,N,0,0,,,2013-11-05 11:09,2013-11-05 11:09,admin,admin,
133,101850,4512,26094,6590,0,N,N,N,CP_Drtn,TT_Task,DT_FixedDUR2,TK_NotStart,JF721.459,RT testing for the welding,6942,272,0,40,0,240,240,40,80,0,80,,,,2013-07-30 14:00,2013-08-04 09:00,,2013-07-01 12:00,2013-07-05 14:30,2013-07-01 12:00,2013-07-05 14:30,2013-07-01 12:00,2013-07-05 14:30,2013-07-30 14:00,2013-08-04 09:00,,PT_Normal,,,,,GeF1ZpNe+UGzt8DISsehfQ,Bc+toI8VmUGsp2SonmfYsg,,,N,0,0,,,2013-11-05 11:09,2013-11-05 11:09,admin,admin,
134,101851,4512,26094,6590,0,N,N,N,CP_Drtn,TT_Task,DT_FixedDUR2,TK_NotStart,JF721.460,Sand testing,6915,272,0,40,0,240,240,40,80,0,80,,,,2013-08-04 09:00,2013-08-08 09:00,,2013-07-06 07:00,2013-07-09 17:00,2013-07-06 07:00,2013-07-09 17:00,2013-07-06 07:00,2013-07-09 17:00,2013-08-04 09:00,2013-08-08 09:00,,PT_Normal,,,,,UIcmFVM1/Umr/FUJnlTOJQ,cFr8gK331kqMvYV03T5dHA,,,N,0,0,,,2013-11-05 11:09,2013-11-05 11:09,admin,admin,
135,101852,4512,26094,6590,0,N,N,N,CP_Drtn,TT_Task,DT_FixedDUR2,TK_NotStart,JF721.461,Tank Calibration,6965,272,0,24,0,140,140,24,40,0,40,,,,2013-08-08 09:00,2013-08-11 08:00,,2013-07-10 07:00,2013-07-12 13:30,2013-07-10 07:00,2013-07-12 13:30,2013-07-10 07:00,2013-07-12 13:30,2013-08-08 09:00,2013-08-11 08:00,,PT_Normal,,,,,jrciM9QVtEy0bg54HedBBQ,x7QmKf7CPEeCne+hTwDCMA,,,N,0,0,,,2013-11-05 11:09,2013-11-05 11:09,admin,admin,
136,101853,4512,26054,6590,0,N,N,N,CP_Drtn,TT_Task,DT_FixedDUR2,TK_NotStart,JF721.462,FInal Inspection & Hand over to client,6915,272,0,24,0,240,240,24,60,0,60,,,,2013-08-11 08:00,2013-08-13 12:00,,2013-07-12 13:30,2013-07-15 10:00,2013-07-12 13:30,2013-07-15 10:00,2013-07-12 13:30,2013-07-15 10:00,2013-08-11 08:00,2013-08-13 12:00,,PT_Normal,,,,,W7+QFLV06UWPrIS8VUwL7Q,I9JlI74c8UyY7wb7nq2A5Q,,,N,0,0,,,2013-11-05 11:09,2013-11-05 11:09,admin,admin,
137,101854,4512,26074,6590,0,N,N,N,CP_Drtn,TT_Task,DT_FixedDUR2,TK_NotStart,JF721.375,Rental For Workers & Engineers Accomodation with Facilities,6915,272,0,40,0,240,240,40,160,0,160,,,,2012-08-02 09:00,2012-08-06 14:00,,2012-07-04 07:00,2012-07-08 12:00,2012-07-04 07:00,2012-07-08 12:00,2012-07-04 07:00,2012-07-08 12:00,2012-08-02 09:00,2012-08-06 14:00,,PT_Normal,,,,,4m5P86Z2GE+RjZ/sLjWmSA,HrSgeaSbv0CSiWrOgcgh6Q,,,N,0,0,,,2013-11-05 11:09,2013-11-05 11:09,admin,admin,
138,101855,4512,26074,6590,0,N,N,N,CP_Drtn,TT_Task,DT_FixedDUR2,TK_NotStart,JF721.377,Ma'aden Inspection & Approval for Portacabins,6915,272,0,16,0,60,60,16,40,0,40,,,,2012-08-27 09:00,2012-08-28 15:00,,2012-07-25 12:00,2012-07-27 10:30,2012-07-25 12:00,2012-07-27 10:30,2012-07-25 12:00,2012-07-27 10:30,2012-08-27 09:00,2012-08-28 15:00,,PT_Normal,,,,,4NOnb7XaFk+UEzl31JWaYQ,gfOjc+CVD02J1vIWbNmX4Q,,,N,0,0,,,2013-11-05 11:09,2013-11-05 11:09,admin,admin,
139,101856,4512,26074,6590,0,N,N,N,CP_Drtn,TT_Task,DT_FixedDUR2,TK_NotStart,JF721.376,Complete Mobilize AZ Equipment to Site & Prepare the site fabrication yard,6951,272,0,200,0,1680,1680,200,960,0,960,,,,2012-08-02 09:00,2012-08-27 09:00,,2012-07-04 07:00,2012-07-25 12:00,2012-07-04 07:00,2012-07-25 12:00,2012-07-04 07:00,2012-07-25 12:00,2012-08-02 09:00,2012-08-27 09:00,,PT_Normal,,,,,YGuSoFMo6kGhzyisY9L1lA,MMvSbrC2QkyGClDJyH1uJQ,,,N,0,0,,,2013-11-05 11:09,2013-11-05 11:09,admin,admin,
140,101857,4512,26056,6590,0,N,N,N,CP_Drtn,TT_Task,DT_FixedDUR2,TK_NotStart,JF721.378,Layout/Stake-out,6942,272,0,24,0,240,240,24,80,0,80,,,,2012-08-28 15:00,2012-08-31 11:30,,2012-07-27 10:30,2012-07-29 17:00,2012-07-27 10:30,2012-07-29 17:00,2012-07-27 10:30,2012-07-29 17:00,2012-08-28 15:00,2012-08-31 11:30,,PT_Normal,,,,,5xfapIMZUEqYu+DQn/BQVQ,zEeV7AYxDU6oxVE21A97rA,,,N,0,0,,,2013-11-05 11:09,2013-11-05 11:09,admin,admin,
141,101858,4512,26056,6590,0,N,N,N,CP_Drtn,TT_Task,DT_FixedDUR2,TK_NotStart,JF721.379,Excavation,6942,272,0,128,0,1950,1950,128,750,0,750,,,,2012-08-29 13:00,2012-09-12 11:00,,2012-07-28 11:00,2012-08-11 09:00,2012-07-28 11:00,2012-08-11 09:00,2012-07-28 11:00,2012-08-11 09:00,2012-08-29 13:00,2012-09-12 11:00,,PT_Normal,,,,,6jnBv3KAJ0GOnS5Ofr6cKA,A40lJUmBtky36sGaQyLSlg,,,N,0,0,,,2013-11-05 11:09,2013-11-05 11:09,admin,admin,
142,101859,4512,26056,6590,0,N,N,N,CP_Drtn,TT_Task,DT_FixedDUR2,TK_NotStart,JF721.380,SteelWorks/Formworks,6980,272,0,88,0,1400,1400,88,400,0,400,,,,2012-09-12 11:00,2012-09-22 09:00,,2012-08-11 09:00,2012-08-23 12:00,2012-08-11 09:00,2012-08-23 12:00,2012-08-11 09:00,2012-08-23 12:00,2012-09-12 11:00,2012-09-22 09:00,,PT_Normal,,,,,LJVQa0Vr8kS5rxNUghw2cA,OqdqJmCL+EKcmdEpK9P4sA,,,N,0,0,,,2013-11-05 11:09,2013-11-05 11:09,admin,admin,
143,101860,4512,26056,6590,0,N,N,N,CP_Drtn,TT_Task,DT_FixedDUR2,TK_NotStart,JF721.381,Soil Compaction,6965,272,0,88,0,900,900,88,500,0,500,,,,2012-09-22 09:00,2012-10-01 12:00,,2012-08-23 12:00,2012-09-02 10:00,2012-08-23 12:00,2012-09-02 10:00,2012-08-23 12:00,2012-09-02 10:00,2012-09-22 09:00,2012-10-01 12:00,,PT_Normal,,,,,4AJVwPXRUEKreIPiwqRKXw,Fw1ZJ+kPUUypXcJsWVdREg,,,N,0,0,,,2013-11-05 11:09,2013-11-05 11:09,admin,admin,
144,101861,4512,26057,6590,0,N,N,N,CP_Drtn,TT_Task,DT_FixedDUR2,TK_NotStart,JF721.382,Concrete Pouring,6951,272,0,48,0,600,600,48,158,0,158,,,,2012-10-01 12:00,2012-10-06 15:00,,2012-09-02 10:00,2012-09-07 10:30,2012-09-02 10:00,2012-09-07 10:30,2012-09-02 10:00,2012-09-07 10:30,2012-10-01 12:00,2012-10-06 15:00,,PT_Normal,,,,,FjSvJhgnikqlEkvhtF5NRQ,IS4vCyzVkEaBdYQLzRNHwA,,,N,0,0,,,2013-11-05 11:09,2013-11-05 11:09,admin,admin,
145,101862,4512,26057,6590,0,N,N,N,CP_Drtn,TT_Task,DT_FixedDUR2,TK_NotStart,JF721.383,Concrete Curing,6965,272,0,24,0,220,220,24,80,0,80,,,,2012-10-06 15:00,2012-10-09 09:00,,2012-09-07 10:30,2012-09-09 17:00,2012-09-07 10:30,2012-09-09 17:00,2012-09-07 10:30,2012-09-09 17:00,2012-10-06 15:00,2012-10-09 09:00,,PT_Normal,,,,,gi84ZysS3UCmoWsRmMZeWQ,1YEsaRCpGkWH2OpUJiN/cQ,,,N,0,0,,,2013-11-05 11:09,2013-11-05 11:09,admin,admin,
146,101863,4512,26057,6590,0,N,N,N,CP_Drtn,TT_Task,DT_FixedDUR2,TK_NotStart,JF721.384,Removal of Formworks,6951,272,0,88,0,1100,1100,88,400,0,400,,,,2012-10-09 09:00,2012-10-18 12:00,,2012-09-10 07:00,2012-09-19 10:00,2012-09-10 07:00,2012-09-19 10:00,2012-09-10 07:00,2012-09-19 10:00,2012-10-09 09:00,2012-10-18 12:00,,PT_Normal,,,,,gsmkp7Ic10qKoovbv7pGTg,M6QYgC4jbUu+Pmc6mpXdDQ,,,N,0,0,,,2013-11-05 11:09,2013-11-05 11:09,admin,admin,
147,101864,4512,26057,6590,0,N,N,N,CP_Drtn,TT_Task,DT_FixedDUR2,TK_NotStart,JF721.385,Backfilling,6965,272,0,112,0,1560,1560,112,650,0,650,,,,2012-10-18 12:00,2012-11-01 09:00,,2012-09-19 10:00,2012-10-01 12:00,2012-09-19 10:00,2012-10-01 12:00,2012-09-19 10:00,2012-10-01 12:00,2012-10-18 12:00,2012-11-01 09:00,,PT_Normal,,,,,JvH2Yll83kmN9+W8NIHuVA,3eyz/V5xikmiPeysCYtyww,,,N,0,0,,,2013-11-05 11:09,2013-11-05 11:09,admin,admin,
148,101865,4512,26058,6590,0,N,N,N,CP_Drtn,TT_FinMile,DT_FixedDrtn,TK_NotStart,3.7,Complete MOBILIZATION of camp with Catering and accommodation facilities,,272,0,0,0,0,0,0,0,0,0,,,,2012-08-28 15:00,2012-08-28 15:00,,2012-07-27 10:30,2012-07-27 10:30,2012-07-27 10:30,2012-07-27 10:30,2012-07-27 10:30,2012-07-27 10:30,2012-08-28 15:00,2012-08-28 15:00,,PT_Normal,,,,,WJfcBbxkGEylv6qrVt/nWg,,,,N,0,0,,,2013-11-05 11:09,2013-11-05 11:09,admin,admin,
149,101866,4512,26100,6590,0,N,N,N,CP_Drtn,TT_FinMile,DT_FixedDrtn,TK_NotStart,3.9,Complete COnstruction of Civil/Structural works,,272,0,0,0,0,0,0,0,0,0,,,,2012-11-01 09:00,2012-11-01 09:00,,2012-10-01 12:00,2012-10-01 12:00,2012-10-01 12:00,2012-10-01 12:00,2012-10-01 12:00,2012-10-01 12:00,2012-11-01 09:00,2012-11-01 09:00,,PT_Normal,,,,,pL77VMleCkahN3SuKWo4mA,,,,N,0,0,,,2013-11-05 11:09,2013-11-05 11:09,admin,admin,
150,101867,4512,26183,6590,0,N,N,N,CP_Drtn,TT_FinMile,DT_FixedDrtn,TK_NotStart,4.C,Final Testing,,360,0,0,0,0,0,0,0,0,0,,,,2013-05-07 10:00,2013-05-07 10:00,,2013-03-29 12:30,2013-03-29 12:30,2013-03-29 12:30,2013-03-29 12:30,2013-03-29 12:30,2013-03-29 12:30,2013-05-07 10:00,2013-05-07 10:00,,PT_Normal,,,,,3Ew/quzocke/Dm+qBj4eEw,,,,N,0,0,,,2013-11-05 11:09,2013-11-05 11:09,admin,admin,
151,101868,4512,26102,6590,0,N,N,N,CP_Drtn,TT_FinMile,DT_FixedDrtn,TK_NotStart,3.10,Complete Installation,,272,0,0,0,0,0,0,0,0,0,,,,2013-07-27 12:00,2013-07-27 12:00,,2013-06-27 15:00,2013-06-27 15:00,2013-06-27 15:00,2013-06-27 15:00,2013-06-27 15:00,2013-06-27 15:00,2013-07-27 12:00,2013-07-27 12:00,,PT_Normal,,,,,hSEmaBZJEU+tbB6i26e7dQ,,,,N,0,0,,,2013-11-05 11:09,2013-11-05 11:09,admin,admin,
152,101869,4512,26062,6590,0,N,N,N,CP_Drtn,TT_FinMile,DT_FixedDrtn,TK_NotStart,3.C,Third Party Testing,,272,0,0,0,0,0,0,0,0,0,,,,2013-08-11 08:00,2013-08-11 08:00,,2013-07-12 13:30,2013-07-12 13:30,2013-07-12 13:30,2013-07-12 13:30,2013-07-12 13:30,2013-07-12 13:30,2013-08-11 08:00,2013-08-11 08:00,,PT_Normal,,,,,msUat+g//Eap74bjRTw7Gg,,,,N,0,0,,,2013-11-05 11:09,2013-11-05 11:09,admin,admin,
153,101870,4512,26082,6590,0,N,N,N,CP_Drtn,TT_FinMile,DT_FixedDrtn,TK_NotStart,6.C,Project Completion,,272,232,0,0,0,0,0,0,0,0,,,,2013-08-13 12:00,2013-08-13 12:00,,2013-07-15 10:00,2013-07-15 10:00,2013-07-15 10:00,2013-07-15 10:00,2013-07-15 10:00,2013-07-15 10:00,2013-08-13 12:00,2013-08-13 12:00,,PT_Normal,,,,,P951OqwKDEaNaN8QcXzHnw,,,,N,0,0,,,2013-11-05 11:09,2013-11-05 11:09,admin,admin,
154,101871,4512,26064,6590,0,N,N,N,CP_Drtn,TT_FinMile,DT_FixedDrtn,TK_NotStart,2.C,MCC,,272,0,0,0,0,0,0,0,0,0,,,,2013-03-30 13:00,2013-03-30 13:00,,2013-02-28 16:00,2013-02-28 16:00,2013-02-28 16:00,2013-02-28 16:00,2013-02-28 16:00,2013-02-28 16:00,2013-03-30 13:00,2013-03-30 13:00,,PT_Normal,,,,,jPwXFrtGEkeYVMcISRc1ng,,,,N,0,0,,,2013-11-05 11:09,2013-11-05 11:09,admin,admin,
155,101872,4512,26066,6590,0,N,N,N,CP_Drtn,TT_Task,DT_FixedDrtn,TK_NotStart,JF721.309,Soil Investigation Works,6911,0,0,16,0,20,20,16,0,0,0,,,,2012-06-30 07:00,2012-07-01 13:00,,2012-06-30 07:00,2012-07-01 13:00,2012-06-30 07:00,2012-07-01 13:00,2012-06-30 07:00,2012-07-01 13:00,2012-06-30 07:00,2012-07-01 13:00,,PT_Normal,,,,,p8trd+R4BUGTFAZ3DHN/7Q,tilj/BgtPUyImT3a3vjOZA,,,Y,0,0,,,2013-11-05 11:09,2013-11-05 11:09,admin,admin,
156,101873,4512,26108,6590,0,N,N,N,CP_Drtn,TT_Task,DT_FixedDUR2,TK_NotStart,JF721.310,60% Submittal,6917,352,0,8,0,8,8,8,0,0,0,,,,2012-08-08 10:00,2012-08-09 08:00,,2012-07-01 13:00,2012-07-02 11:00,2012-07-01 13:00,2012-07-02 11:00,2012-07-01 13:00,2012-07-02 11:00,2012-08-08 10:00,2012-08-09 08:00,,PT_Normal,,,,,ApsKOJZq5kaACcW1s6dDHQ,kuI23ko2K06nGh7pYlYbPw,,,N,0,0,,,2013-11-05 11:09,2013-11-05 11:09,admin,admin,
157,101874,4512,26108,6590,0,N,N,N,CP_Drtn,TT_Task,DT_FixedDUR2,TK_NotStart,JF721.311,60% Comments Incooperation,6917,352,0,56,0,56,56,56,0,0,0,,,,2012-08-09 08:00,2012-08-15 09:00,,2012-07-02 11:00,2012-07-08 12:00,2012-07-02 11:00,2012-07-08 12:00,2012-07-02 11:00,2012-07-08 12:00,2012-08-09 08:00,2012-08-15 09:00,,PT_Normal,,,,,j6lBLcRkT0e0g59IV1xs4A,0U9JnQMiOk6YIsiiWu85PQ,,,N,0,0,,,2013-11-05 11:09,2013-11-05 11:09,admin,admin,
158,101875,4512,26108,6590,0,N,N,N,CP_Drtn,TT_Task,DT_FixedDUR2,TK_NotStart,JF721.312,90% Submittal,6917,352,0,8,0,8,8,8,0,0,0,,,,2012-08-15 09:00,2012-08-15 17:00,,2012-07-08 12:00,2012-07-09 10:00,2012-07-08 12:00,2012-07-09 10:00,2012-07-08 12:00,2012-07-09 10:00,2012-08-15 09:00,2012-08-15 17:00,,PT_Normal,,,,,79XIYzRfu0u/0C0L1OkRxA,C7hTBAQqiEyYNqvlOGroXg,,,N,0,0,,,2013-11-05 11:09,2013-11-05 11:09,admin,admin,
159,101876,4512,26108,6590,0,N,N,N,CP_Drtn,TT_Task,DT_FixedDUR2,TK_NotStart,JF721.313,90% Comments Incooperation,6917,352,0,56,0,56,56,56,0,0,0,,,,2012-08-16 07:00,2012-08-25 13:00,,2012-07-09 10:00,2012-07-15 11:00,2012-07-09 10:00,2012-07-15 11:00,2012-07-09 10:00,2012-07-15 11:00,2012-08-16 07:00,2012-08-25 13:00,,PT_Normal,,,,,lnw1cag3R0O47f9/+iMwXg,UIcoV7UUWk2wV+KfS2SSeQ,,,N,0,0,,,2013-11-05 11:09,2013-11-05 11:09,admin,admin,
160,101877,4512,26108,6590,0,N,N,N,CP_Drtn,TT_Task,DT_FixedDUR2,TK_NotStart,JF721.314,IFC,6917,352,0,24,0,24,24,24,0,0,0,,,,2012-08-25 13:00,2012-08-27 17:00,,2012-07-15 11:00,2012-07-17 15:00,2012-07-15 11:00,2012-07-17 15:00,2012-07-15 11:00,2012-07-17 15:00,2012-08-25 13:00,2012-08-27 17:00,,PT_Normal,,,,,7U3hovRFyU2GifvlaZ/1qw,fsVRMhL8s0SJGjy9GoYmEA,,,N,0,0,,,2013-11-05 11:09,2013-11-05 11:09,admin,admin,
161,101878,4512,26109,6590,0,N,N,N,CP_Drtn,TT_Task,DT_FixedDUR2,TK_NotStart,JF721.315,60% Submittal (Tank & Foundation Drawings),6917,352,0,8,0,24,24,8,0,0,0,,,,2012-08-28 07:00,2012-08-28 15:00,,2012-07-17 15:00,2012-07-18 13:00,2012-07-17 15:00,2012-07-18 13:00,2012-07-17 15:00,2012-07-18 13:00,2012-08-28 07:00,2012-08-28 15:00,,PT_Normal,,,,,0qLanKMU/UOqz87kqXYMfw,pa4t8JX3xUOmdD13f/QgrQ,,,N,0,0,,,2013-11-05 11:09,2013-11-05 11:09,admin,admin,
162,101879,4512,26109,6590,0,N,N,N,CP_Drtn,TT_Task,DT_FixedDUR2,TK_NotStart,JF721.316,60% Comments Incooperation (Tanks & Foundation Drawings),6912,352,0,40,0,120,120,40,0,0,0,,,,2012-08-28 15:00,2012-09-02 10:00,,2012-07-18 13:00,2012-07-23 08:00,2012-07-18 13:00,2012-07-23 08:00,2012-07-18 13:00,2012-07-23 08:00,2012-08-28 15:00,2012-09-02 10:00,,PT_Normal,,,,,ddRcl9JYcE2DNpkQ8PC6uA,c7cKieqgX0eZB6jCi4CYQg,,,N,0,0,,,2013-11-05 11:09,2013-11-05 11:09,admin,admin,
163,101880,4512,26109,6590,0,N,N,N,CP_Drtn,TT_Task,DT_FixedDUR2,TK_NotStart,JF721.317,90% Submittal (Tanks & Foundation Drawings),6913,352,0,8,0,24,24,8,0,0,0,,,,2012-09-02 10:00,2012-09-03 08:00,,2012-07-23 08:00,2012-07-23 16:00,2012-07-23 08:00,2012-07-23 16:00,2012-07-23 08:00,2012-07-23 16:00,2012-09-02 10:00,2012-09-03 08:00,,PT_Normal,,,,,Wc8KZgPLXkmQZ/JU4HUOzg,Oq91g8uAHkud4KjpRIm7Cw,,,N,0,0,,,2013-11-05 11:09,2013-11-05 11:09,admin,admin,
164,101881,4512,26109,6590,0,N,N,N,CP_Drtn,TT_Task,DT_FixedDUR2,TK_NotStart,JF721.318,90% Comments Incooperation (Tanks & Foundation Drawings),6917,352,0,16,0,48,48,16,0,0,0,,,,2012-09-03 08:00,2012-09-04 14:00,,2012-07-23 16:00,2012-07-25 12:00,2012-07-23 16:00,2012-07-25 12:00,2012-07-23 16:00,2012-07-25 12:00,2012-09-03 08:00,2012-09-04 14:00,,PT_Normal,,,,,9PH7yOoCyUavZwHPF6Yo7g,NLfQYfPgL0in5ot1mowPmA,,,N,0,0,,,2013-11-05 11:09,2013-11-05 11:09,admin,admin,
165,101882,4512,26109,6590,0,N,N,N,CP_Drtn,TT_Task,DT_FixedDUR2,TK_NotStart,JF721.319,IFC,6912,360,0,8,0,24,24,8,0,0,0,,,,2012-09-05 12:00,2012-09-06 10:00,,2012-07-25 12:00,2012-07-26 10:00,2012-07-25 12:00,2012-07-26 10:00,2012-07-25 12:00,2012-07-26 10:00,2012-09-05 12:00,2012-09-06 10:00,,PT_Normal,,,,,YQuI1g0xmk6LDHKqz9toMg,YB8e0idN10af30ffswm68g,,,N,0,0,,,2013-11-05 11:09,2013-11-05 11:09,admin,admin,
166,101883,4512,26069,6590,0,N,N,N,CP_Drtn,TT_FinMile,DT_FixedDrtn,TK_NotStart,3.1,Complete survey and Geotechnical Investigation for both Master Pump Station,,272,0,0,0,0,0,0,0,0,0,,,,2012-07-30 15:00,2012-07-30 15:00,,2012-07-01 13:00,2012-07-01 13:00,2012-07-01 13:00,2012-07-01 13:00,2012-07-01 13:00,2012-07-01 13:00,2012-07-30 15:00,2012-07-30 15:00,,PT_Normal,,,,,akvKRaZsUkO7RK6ndHE8GQ,,,,N,0,0,,,2013-11-05 11:09,2013-11-05 11:09,admin,admin,
167,101884,4512,26070,6590,0,N,N,N,CP_Drtn,TT_FinMile,DT_FixedDrtn,TK_NotStart,3.2,Complete Engineering design and Calculations,,352,0,0,0,0,0,0,0,0,0,,,,2012-08-27 17:00,2012-08-27 17:00,,2012-07-17 15:00,2012-07-17 15:00,2012-07-17 15:00,2012-07-17 15:00,2012-07-17 15:00,2012-07-17 15:00,2012-08-27 17:00,2012-08-27 17:00,,PT_Normal,,,,,lljOPpLBtE+FwUGYkFwDgw,,,,N,0,0,,,2013-11-05 11:09,2013-11-05 11:09,admin,admin,
168,101885,4512,26071,6590,0,N,N,N,CP_Drtn,TT_FinMile,DT_FixedDrtn,TK_NotStart,3.3,Complete Fabrication and GA Drawing with Bill of Quantities,,360,8,0,0,0,0,0,0,0,0,,,,2012-09-06 10:00,2012-09-06 10:00,,2012-07-26 10:00,2012-07-26 10:00,2012-07-26 10:00,2012-07-26 10:00,2012-07-26 10:00,2012-07-26 10:00,2012-09-06 10:00,2012-09-06 10:00,,PT_Normal,,,,,PtP8H4nSKUCfDYgAvGtOtw,,,,N,0,0,,,2013-11-05 11:09,2013-11-05 11:09,admin,admin,
169,101886,4512,26156,6590,0,N,N,N,CP_Drtn,TT_Task,DT_FixedDrtn,TK_NotStart,JF721.155,Soil Investigation Works,6911,0,0,16,0,20,20,16,0,0,0,,,,2012-06-30 07:00,2012-07-01 13:00,,2012-06-30 07:00,2012-07-01 13:00,2012-06-30 07:00,2012-07-01 13:00,2012-06-30 07:00,2012-07-01 13:00,2012-06-30 07:00,2012-07-01 13:00,,PT_Normal,,,,,YTFJJGS9Jkmbt0kOmMqiBw,tilj/BgtPUyImT3a3vjOZA,,,Y,0,0,,,2013-11-05 11:09,2013-11-05 11:09,admin,admin,
170,101887,4512,26116,6590,0,N,N,N,CP_Drtn,TT_Task,DT_FixedDUR2,TK_NotStart,JF721.156,60% Submittal,6917,352,0,8,0,8,8,8,0,0,0,,,,2012-08-08 10:00,2012-08-09 08:00,,2012-07-01 13:00,2012-07-02 11:00,2012-07-01 13:00,2012-07-02 11:00,2012-07-01 13:00,2012-07-02 11:00,2012-08-08 10:00,2012-08-09 08:00,,PT_Normal,,,,,Wib1rijJ/kWZBoYZ7ekXuA,kuI23ko2K06nGh7pYlYbPw,,,N,0,0,,,2013-11-05 11:09,2013-11-05 11:09,admin,admin,
171,101888,4512,26116,6590,0,N,N,N,CP_Drtn,TT_Task,DT_FixedDUR2,TK_NotStart,JF721.157,60% Comments Incooperation,6917,352,0,56,0,56,56,56,0,0,0,,,,2012-08-09 08:00,2012-08-15 09:00,,2012-07-02 11:00,2012-07-08 12:00,2012-07-02 11:00,2012-07-08 12:00,2012-07-02 11:00,2012-07-08 12:00,2012-08-09 08:00,2012-08-15 09:00,,PT_Normal,,,,,Vn5pGFt3fUmVMraDzdlm9Q,0U9JnQMiOk6YIsiiWu85PQ,,,N,0,0,,,2013-11-05 11:09,2013-11-05 11:09,admin,admin,
172,101889,4512,26116,6590,0,N,N,N,CP_Drtn,TT_Task,DT_FixedDUR2,TK_NotStart,JF721.158,90% Submittal,6917,352,0,8,0,8,8,8,0,0,0,,,,2012-08-15 09:00,2012-08-15 17:00,,2012-07-08 12:00,2012-07-09 10:00,2012-07-08 12:00,2012-07-09 10:00,2012-07-08 12:00,2012-07-09 10:00,2012-08-15 09:00,2012-08-15 17:00,,PT_Normal,,,,,/IYeyemPGUCqscPyNxjHgw,C7hTBAQqiEyYNqvlOGroXg,,,N,0,0,,,2013-11-05 11:09,2013-11-05 11:09,admin,admin,
173,101890,4512,26116,6590,0,N,N,N,CP_Drtn,TT_Task,DT_FixedDUR2,TK_NotStart,JF721.159,90% Comments Incooperation,6917,352,0,56,0,56,56,56,0,0,0,,,,2012-08-16 07:00,2012-08-25 13:00,,2012-07-09 10:00,2012-07-15 11:00,2012-07-09 10:00,2012-07-15 11:00,2012-07-09 10:00,2012-07-15 11:00,2012-08-16 07:00,2012-08-25 13:00,,PT_Normal,,,,,zpZRHnKEFkOgDAmU2E+NXQ,UIcoV7UUWk2wV+KfS2SSeQ,,,N,0,0,,,2013-11-05 11:09,2013-11-05 11:09,admin,admin,
174,101891,4512,26116,6590,0,N,N,N,CP_Drtn,TT_Task,DT_FixedDUR2,TK_NotStart,JF721.160,IFC,6917,352,0,24,0,24,24,24,0,0,0,,,,2012-08-25 13:00,2012-08-27 17:00,,2012-07-15 11:00,2012-07-17 15:00,2012-07-15 11:00,2012-07-17 15:00,2012-07-15 11:00,2012-07-17 15:00,2012-08-25 13:00,2012-08-27 17:00,,PT_Normal,,,,,DbVAaQROjU698pPmhSCU8Q,fsVRMhL8s0SJGjy9GoYmEA,,,N,0,0,,,2013-11-05 11:09,2013-11-05 11:09,admin,admin,
175,101892,4512,26076,6590,0,N,N,N,CP_Drtn,TT_Task,DT_FixedDUR2,TK_NotStart,JF721.161,60% Submittal (Tank & Foundation Drawings),6917,560,0,8,0,24,24,8,0,0,0,,,,2012-09-19 10:00,2012-09-20 08:00,,2012-07-17 15:00,2012-07-18 13:00,2012-07-17 15:00,2012-07-18 13:00,2012-07-17 15:00,2012-07-18 13:00,2012-09-19 10:00,2012-09-20 08:00,,PT_Normal,,,,,49e0ptqP3Em9yzzTQa247A,pa4t8JX3xUOmdD13f/QgrQ,,,N,0,0,,,2013-11-05 11:09,2013-11-05 11:09,admin,admin,
176,101893,4512,26076,6590,0,N,N,N,CP_Drtn,TT_Task,DT_FixedDUR2,TK_NotStart,JF721.162,60% Comments Incooperation (Tanks & Foundation Drawings),6913,560,0,40,0,120,120,40,0,0,0,,,,2012-09-20 08:00,2012-09-24 13:00,,2012-07-18 13:00,2012-07-23 08:00,2012-07-18 13:00,2012-07-23 08:00,2012-07-18 13:00,2012-07-23 08:00,2012-09-20 08:00,2012-09-24 13:00,,PT_Normal,,,,,J5zOZnpN+0CGz9lRe0/u2g,c7cKieqgX0eZB6jCi4CYQg,,,N,0,0,,,2013-11-05 11:09,2013-11-05 11:09,admin,admin,
177,101894,4512,26076,6590,0,N,N,N,CP_Drtn,TT_Task,DT_FixedDUR2,TK_NotStart,JF721.163,90% Submittal (Tanks & Foundation Drawings),6917,560,0,8,0,24,24,8,0,0,0,,,,2012-09-24 13:00,2012-09-25 11:00,,2012-07-23 08:00,2012-07-23 16:00,2012-07-23 08:00,2012-07-23 16:00,2012-07-23 08:00,2012-07-23 16:00,2012-09-24 13:00,2012-09-25 11:00,,PT_Normal,,,,,kzK1+OOdQ0mcJiViKjukcg,Oq91g8uAHkud4KjpRIm7Cw,,,N,0,0,,,2013-11-05 11:09,2013-11-05 11:09,admin,admin,
178,101895,4512,26076,6590,0,N,N,N,CP_Drtn,TT_Task,DT_FixedDUR2,TK_NotStart,JF721.164,90% Comments Incooperation (Tanks & Foundation Drawings),6912,560,0,16,0,48,48,16,0,0,0,,,,2012-09-25 11:00,2012-09-26 17:00,,2012-07-23 16:00,2012-07-25 12:00,2012-07-23 16:00,2012-07-25 12:00,2012-07-23 16:00,2012-07-25 12:00,2012-09-25 11:00,2012-09-26 17:00,,PT_Normal,,,,,udFEOuxRqEO/j6ZACnEj9A,NLfQYfPgL0in5ot1mowPmA,,,N,0,0,,,2013-11-05 11:09,2013-11-05 11:09,admin,admin,
179,101896,4512,26076,6590,0,N,N,N,CP_Drtn,TT_Task,DT_FixedDUR2,TK_NotStart,JF721.165,IFC,6917,568,0,8,0,24,24,8,0,0,0,,,,2012-09-27 15:00,2012-09-29 08:00,,2012-07-25 12:00,2012-07-26 10:00,2012-07-25 12:00,2012-07-26 10:00,2012-07-25 12:00,2012-07-26 10:00,2012-09-27 15:00,2012-09-29 08:00,,PT_Normal,,,,,0c2BIrk1BE+I4Knce0wgJQ,YB8e0idN10af30ffswm68g,,,N,0,0,,,2013-11-05 11:09,2013-11-05 11:09,admin,admin,
180,101897,4512,26077,6590,0,N,N,N,CP_Drtn,TT_FinMile,DT_FixedDrtn,TK_NotStart,2.2,Complete survey and Geotechnical Investigation for both Master Pump Station,,352,0,0,0,0,0,0,0,0,0,,,,2012-08-08 10:00,2012-08-08 10:00,,2012-07-01 13:00,2012-07-01 13:00,2012-07-01 13:00,2012-07-01 13:00,2012-07-01 13:00,2012-07-01 13:00,2012-08-08 10:00,2012-08-08 10:00,,PT_Normal,,,,,uA9LbTZQwU+1iZ0tlTOCfg,,,,N,0,0,,,2013-11-05 11:09,2013-11-05 11:09,admin,admin,
181,101898,4512,26078,6590,0,N,N,N,CP_Drtn,TT_FinMile,DT_FixedDrtn,TK_NotStart,2.3,Complete Engineering design and Calculations,,560,0,0,0,0,0,0,0,0,0,,,,2012-09-19 10:00,2012-09-19 10:00,,2012-07-17 15:00,2012-07-17 15:00,2012-07-17 15:00,2012-07-17 15:00,2012-07-17 15:00,2012-07-17 15:00,2012-09-19 10:00,2012-09-19 10:00,,PT_Normal,,,,,LInL8zuYfEGHjCdMkP9h2g,,,,N,0,0,,,2013-11-05 11:09,2013-11-05 11:09,admin,admin,
182,101899,4512,26079,6590,0,N,N,N,CP_Drtn,TT_FinMile,DT_FixedDrtn,TK_NotStart,2.4,Complete Fabrication and GA Drawing with Bill of Quantities,,568,8,0,0,0,0,0,0,0,0,,,,2012-09-29 08:00,2012-09-29 08:00,,2012-07-26 10:00,2012-07-26 10:00,2012-07-26 10:00,2012-07-26 10:00,2012-07-26 10:00,2012-07-26 10:00,2012-09-29 08:00,2012-09-29 08:00,,PT_Normal,,,,,dT1c8+U+xUOARCSgeE47WA,,,,N,0,0,,,2013-11-05 11:09,2013-11-05 11:09,admin,admin,
183,101900,4512,26081,6590,0,N,N,N,CP_Drtn,TT_Task,DT_FixedDUR2,TK_NotStart,JF721.172,PO Issued,,608,0,24,0,0,0,24,0,0,0,,,,2012-09-16 16:00,2012-09-19 10:00,,2012-07-10 08:00,2012-07-12 12:00,2012-07-10 08:00,2012-07-12 12:00,2012-07-10 08:00,2012-07-12 12:00,2012-09-16 16:00,2012-09-19 10:00,,PT_Normal,,,,,YoIm3X39hkCopmO7buDRCQ,xMKajeOpB0i4h5bLtqRGTg,,,N,0,0,,,2013-11-05 11:09,2013-11-05 11:09,admin,admin,
184,101901,4512,26081,6590,0,N,N,N,CP_Drtn,TT_Task,DT_FixedDUR2,TK_NotStart,JF721.173,Ma'aden Site Delievery,,608,224,64,0,0,0,64,0,0,0,,,,2012-09-19 10:00,2012-09-26 09:00,,2012-07-12 12:00,2012-07-19 11:00,2012-07-12 12:00,2012-07-19 11:00,2012-07-12 12:00,2012-07-19 11:00,2012-09-19 10:00,2012-09-26 09:00,,PT_Normal,,,,,Y42uiPds+0+RXdWIpXtkKg,WxdmX0lSU0yS7+MyaW6J3A,,,N,0,0,,,2013-11-05 11:09,2013-11-05 11:09,admin,admin,
185,101902,4512,26101,6590,0,N,N,N,CP_Drtn,TT_Task,DT_FixedDUR2,TK_NotStart,JF721.174,Approval For Vendor Drawings & Specifications,,560,0,24,0,0,0,24,0,0,0,,,,2012-09-26 09:00,2012-09-29 08:00,,2012-07-24 14:00,2012-07-27 10:30,2012-07-24 14:00,2012-07-27 10:30,2012-07-24 14:00,2012-07-27 10:30,2012-09-26 09:00,2012-09-29 08:00,,PT_Normal,,,,,fmArMvQDA02tabIg3CNSIA,xFeCmUgdS0OLH25pLZzIMQ,,,N,0,0,,,2013-11-05 11:09,2013-11-05 11:09,admin,admin,
186,101903,4512,26101,6590,0,N,N,N,CP_Drtn,TT_Task,DT_FixedDUR2,TK_NotStart,JF721.175,P.O Issued,,1272,0,216,0,0,0,216,0,0,0,,,,2012-12-16 10:00,2013-01-08 11:00,,2012-07-27 10:30,2012-08-22 14:00,2012-07-27 10:30,2012-08-22 14:00,2012-07-27 10:30,2012-08-22 14:00,2012-12-16 10:00,2013-01-08 11:00,,PT_Normal,,,,,r6MkHevCek6ImrgKcylZiw,qnXKJs7SVE2Aq/+ydLIq0g,,,N,0,0,,,2013-11-05 11:09,2013-11-05 11:09,admin,admin,
187,101904,4512,26083,6590,0,N,N,N,CP_Drtn,TT_Task,DT_FixedDUR2,TK_NotStart,JF721.180,Approve Vendor Drawings & Specifcations,,352,0,24,0,0,0,24,0,0,0,,,,2012-08-28 07:00,2012-08-30 11:00,,2012-07-17 15:00,2012-07-20 11:30,2012-07-17 15:00,2012-07-20 11:30,2012-07-17 15:00,2012-07-20 11:30,2012-08-28 07:00,2012-08-30 11:00,,PT_Normal,,,,,A4VkyW1yTkiMrqUwWAVE6Q,UxxwI734Ikm3B6zma4PbGA,,,N,0,0,,,2013-11-05 11:09,2013-11-05 11:09,admin,admin,
188,101905,4512,26083,6590,0,N,N,N,CP_Drtn,TT_Task,DT_FixedDUR2,TK_NotStart,JF721.181,P.O Issued,,352,0,24,0,0,0,24,0,0,0,,,,2012-08-30 11:00,2012-09-02 10:00,,2012-07-20 11:30,2012-07-23 08:00,2012-07-20 11:30,2012-07-23 08:00,2012-07-20 11:30,2012-07-23 08:00,2012-08-30 11:00,2012-09-02 10:00,,PT_Normal,,,,,bgjRhPpezEG8j2kgrcIhJw,Y+QGEhmC5UqgCTu9l309JA,,,N,0,0,,,2013-11-05 11:09,2013-11-05 11:09,admin,admin,
189,101906,4512,26084,6590,0,N,N,N,CP_Drtn,TT_Task,DT_FixedDUR2,TK_NotStart,JF721.182,Approval for Vendor Drawings & Specifications,,560,0,48,0,0,0,48,0,0,0,,,,2012-09-29 08:00,2012-10-03 16:00,,2012-07-27 10:30,2012-08-01 11:00,2012-07-27 10:30,2012-08-01 11:00,2012-07-27 10:30,2012-08-01 11:00,2012-09-29 08:00,2012-10-03 16:00,,PT_Normal,,,,,RynRx8GyHkiE3lHFNMORHA,At760YrmaEqZSF6XKJXmdA,,,N,0,0,,,2013-11-05 11:09,2013-11-05 11:09,admin,admin,
190,101907,4512,26084,6590,0,N,N,N,CP_Drtn,TT_Task,DT_FixedDUR2,TK_NotStart,JF721.183,PO  Issued,,1184,0,120,0,0,0,120,0,0,0,,,,2012-12-11 15:00,2012-12-24 15:00,,2012-08-01 11:00,2012-08-14 11:00,2012-08-01 11:00,2012-08-14 11:00,2012-08-01 11:00,2012-08-14 11:00,2012-12-11 15:00,2012-12-24 15:00,,PT_Normal,,,,,EmDx8u7yV0KGj6cR+qFzag,QM2hzVjO+0OX23YpP0LSlA,,,N,0,0,,,2013-11-05 11:09,2013-11-05 11:09,admin,admin,
191,101908,4512,26085,6590,0,N,N,N,CP_Drtn,TT_Task,DT_FixedDUR2,TK_NotStart,JF721.184,Approval for Vendor Drawings & Specifications,,560,0,48,0,0,0,48,0,0,0,,,,2012-09-29 08:00,2012-10-03 16:00,,2012-07-27 10:30,2012-08-01 11:00,2012-07-27 10:30,2012-08-01 11:00,2012-07-27 10:30,2012-08-01 11:00,2012-09-29 08:00,2012-10-03 16:00,,PT_Normal,,,,,pFdM2oBct0+D9xt5ZIvSPA,P4hIy46WnkaAgBahNcd1Fg,,,N,0,0,,,2013-11-05 11:09,2013-11-05 11:09,admin,admin,
192,101909,4512,26085,6590,0,N,N,N,CP_Drtn,TT_Task,DT_FixedDUR2,TK_NotStart,JF721.185,PO issued,,560,0,48,0,0,0,48,0,0,0,,,,2012-10-03 16:00,2012-10-09 09:00,,2012-08-01 11:00,2012-08-06 14:00,2012-08-01 11:00,2012-08-06 14:00,2012-08-01 11:00,2012-08-06 14:00,2012-10-03 16:00,2012-10-09 09:00,,PT_Normal,,,,,64gatz+ncUm77B7ugERDVQ,Q+7N4KuxlESJ8vFhIW4qJw,,,N,0,0,,,2013-11-05 11:09,2013-11-05 11:09,admin,admin,
193,101910,4512,26127,6590,0,N,N,N,CP_Drtn,TT_Task,DT_FixedDUR2,TK_NotStart,JF721.186,Approval For vendor Specifcations,,648,0,64,0,0,0,64,0,0,0,,,,2012-10-13 14:00,2012-10-20 13:00,,2012-08-01 11:00,2012-08-08 10:00,2012-08-01 11:00,2012-08-08 10:00,2012-08-01 11:00,2012-08-08 10:00,2012-10-13 14:00,2012-10-20 13:00,,PT_Normal,,,,,K9GnWEZIdk6bnfPtTqgSjQ,y+HmYyh9cEyxgRIPJ0WXkQ,,,N,0,0,,,2013-11-05 11:09,2013-11-05 11:09,admin,admin,
194,101911,4512,26127,6590,0,N,N,N,CP_Drtn,TT_Task,DT_FixedDUR2,TK_NotStart,JF721.187,PO issued,,648,0,32,0,0,0,32,0,0,0,,,,2012-10-20 13:00,2012-10-23 15:00,,2012-08-08 10:00,2012-08-11 17:00,2012-08-08 10:00,2012-08-11 17:00,2012-08-08 10:00,2012-08-11 17:00,2012-10-20 13:00,2012-10-23 15:00,,PT_Normal,,,,,ee1qQYs/A0iEjwyKWd86vg,np9x9mx8dE6Sens4t7ctEQ,,,N,0,0,,,2013-11-05 11:09,2013-11-05 11:09,admin,admin,
195,101912,4512,26128,6590,0,N,N,N,CP_Drtn,TT_Task,DT_FixedDUR2,TK_NotStart,JF721.176,Approval for vendor Drawings & Specifcations,,560,0,24,0,0,0,24,0,0,0,,,,2012-09-26 09:00,2012-09-29 08:00,,2012-07-24 14:00,2012-07-27 10:30,2012-07-24 14:00,2012-07-27 10:30,2012-07-24 14:00,2012-07-27 10:30,2012-09-26 09:00,2012-09-29 08:00,,PT_Normal,,,,,5WDSMA1g+EOf9ek+8SgzgA,cSJ8dgKJP0Ww5ZhDDHiEBQ,,,N,0,0,,,2013-11-05 11:09,2013-11-05 11:09,admin,admin,
196,101913,4512,26128,6590,0,N,N,N,CP_Drtn,TT_Task,DT_FixedDUR2,TK_NotStart,JF721.177,P.O Issued,,1272,0,216,0,0,0,216,0,0,0,,,,2012-12-16 10:00,2013-01-08 11:00,,2012-07-27 10:30,2012-08-22 14:00,2012-07-27 10:30,2012-08-22 14:00,2012-07-27 10:30,2012-08-22 14:00,2012-12-16 10:00,2013-01-08 11:00,,PT_Normal,,,,,0Zyavwd2V0id4US2z61BVg,oeNA0lF1IUuYn1p65K4tsA,,,N,0,0,,,2013-11-05 11:09,2013-11-05 11:09,admin,admin,
197,101914,4512,26128,6590,0,N,N,N,CP_Drtn,TT_Task,DT_FixedDUR2,TK_NotStart,JF721.178,Instrumentation Delievered to Ma'aden & Installed,6965,352,0,224,0,1350,1350,224,600,0,600,,,,2013-06-20 08:00,2013-07-14 12:00,,2013-05-13 11:00,2013-06-06 10:00,2013-05-13 11:00,2013-06-06 10:00,2013-05-13 11:00,2013-06-06 10:00,2013-06-20 08:00,2013-07-14 12:00,,PT_Normal,,,,,gXaFTZKZmUuHjcOwPVZ/sg,XWpE3LpQKUSrjVSLh/WhAA,,,N,0,0,,,2013-11-05 11:09,2013-11-05 11:09,admin,admin,
198,101915,4512,26128,6590,0,N,N,N,CP_Drtn,TT_Task,DT_FixedDUR2,TK_NotStart,JF721.179,Ma'aden Instrumentation Inspection,6964,352,0,24,0,80,80,24,40,0,40,,,,2013-07-14 12:00,2013-07-16 16:00,,2013-06-06 10:00,2013-06-09 09:00,2013-06-06 10:00,2013-06-09 09:00,2013-06-06 10:00,2013-06-09 09:00,2013-07-14 12:00,2013-07-16 16:00,,PT_Normal,,,,,OHQnWGZ7aESt2hpP1FEubA,o7LARIfvNEaQ09oTYwd4YA,,,N,0,0,,,2013-11-05 11:09,2013-11-05 11:09,admin,admin,
199,101916,4512,26088,6590,0,N,N,N,CP_Drtn,TT_Task,DT_FixedDUR2,TK_NotStart,JF721.191,Define Layout,,352,0,24,0,0,0,24,0,0,0,,,,2012-10-12 13:30,2012-10-15 10:00,,2012-09-04 14:00,2012-09-07 10:30,2012-09-04 14:00,2012-09-07 10:30,2012-09-04 14:00,2012-09-07 10:30,2012-10-12 13:30,2012-10-15 10:00,,PT_Normal,,,,,DMhnHFpwTECPxeuTNbwA0A,NqASMdRNOUqFzefQ0Sq3bQ,,,N,0,0,,,2013-11-05 11:09,2013-11-05 11:09,admin,admin,
200,101917,4512,26088,6590,0,N,N,N,CP_Drtn,TT_Task,DT_FixedDUR2,TK_NotStart,JF721.192,Cutting,,352,0,24,0,0,0,24,0,0,0,,,,2012-10-12 13:30,2012-10-15 10:00,,2012-09-04 14:00,2012-09-07 10:30,2012-09-04 14:00,2012-09-07 10:30,2012-09-04 14:00,2012-09-07 10:30,2012-10-12 13:30,2012-10-15 10:00,,PT_Normal,,,,,o4lSHpLWVky7cFUoAVcRNg,tt3gxgqxak+7rDxte4XbAg,,,N,0,0,,,2013-11-05 11:09,2013-11-05 11:09,admin,admin,
201,101918,4512,26088,6590,0,N,N,N,CP_Drtn,TT_Task,DT_FixedDUR2,TK_NotStart,JF721.193,Fit-up,,352,0,32,0,0,0,32,0,0,0,,,,2012-10-16 16:00,2012-10-20 13:00,,2012-09-09 09:00,2012-09-12 11:00,2012-09-09 09:00,2012-09-12 11:00,2012-09-09 09:00,2012-09-12 11:00,2012-10-16 16:00,2012-10-20 13:00,,PT_Normal,,,,,wgqBWj9NEkykeKk4HketEw,+bPJdke39EC0UzUc8wEY4A,,,N,0,0,,,2013-11-05 11:09,2013-11-05 11:09,admin,admin,
202,101919,4512,26088,6590,0,N,N,N,CP_Drtn,TT_Task,DT_FixedDUR2,TK_NotStart,JF721.194,Welding,,352,0,32,0,0,0,32,0,0,0,,,,2012-10-17 14:00,2012-10-21 11:00,,2012-09-10 07:00,2012-09-13 09:00,2012-09-10 07:00,2012-09-13 09:00,2012-09-10 07:00,2012-09-13 09:00,2012-10-17 14:00,2012-10-21 11:00,,PT_Normal,,,,,BrK4V4cdKEW/51s6MbO+Zg,BabspVpVGkKisBRG/u9JMw,,,N,0,0,,,2013-11-05 11:09,2013-11-05 11:09,admin,admin,
203,101920,4512,26088,6590,0,N,N,N,CP_Drtn,TT_Task,DT_FixedDUR2,TK_NotStart,JF721.195,Shop Blasting/Painting,,352,0,32,0,0,0,32,0,0,0,,,,2012-10-18 12:00,2012-10-22 09:00,,2012-09-10 15:00,2012-09-13 17:00,2012-09-10 15:00,2012-09-13 17:00,2012-09-10 15:00,2012-09-13 17:00,2012-10-18 12:00,2012-10-22 09:00,,PT_Normal,,,,,+1QZk5XsU0OmyTcdoAnbAw,JgwK0VqNtkWPp1NEl6/QyA,,,N,0,0,,,2013-11-05 11:09,2013-11-05 11:09,admin,admin,
204,101921,4512,26088,6590,0,N,N,N,CP_Drtn,TT_Task,DT_FixedDUR2,TK_NotStart,JF721.196,Inspect & Accept for use,,352,0,24,0,0,0,24,0,0,0,,,,2012-10-22 09:00,2012-10-24 13:00,,2012-09-14 09:30,2012-09-16 16:00,2012-09-14 09:30,2012-09-16 16:00,2012-09-14 09:30,2012-09-16 16:00,2012-10-22 09:00,2012-10-24 13:00,,PT_Normal,,,,,+YT3QRbhG0e6JCoZCXsRdQ,NIRxJhgScUO/HK/CeyoG5g,,,N,0,0,,,2013-11-05 11:09,2013-11-05 11:09,admin,admin,
205,101922,4512,26130,6590,0,N,N,N,CP_Drtn,TT_Task,DT_FixedDUR2,TK_NotStart,JF721.197,Define Layout,,784,0,32,0,0,0,32,0,0,0,,,,2012-12-02 12:00,2012-12-05 14:00,,2012-09-07 10:30,2012-09-10 15:00,2012-09-07 10:30,2012-09-10 15:00,2012-09-07 10:30,2012-09-10 15:00,2012-12-02 12:00,2012-12-05 14:00,,PT_Normal,,,,,WAOMrE7ByEO2uLw8YZlAzQ,KvXnSNnJE0ebZGxmJ4g79A,,,N,0,0,,,2013-11-05 11:09,2013-11-05 11:09,admin,admin,
206,101923,4512,26130,6590,0,N,N,N,CP_Drtn,TT_Task,DT_FixedDUR2,TK_NotStart,JF721.198,Cutting,,784,0,40,0,0,0,40,0,0,0,,,,2012-12-02 12:00,2012-12-06 12:00,,2012-09-07 10:30,2012-09-11 13:00,2012-09-07 10:30,2012-09-11 13:00,2012-09-07 10:30,2012-09-11 13:00,2012-12-02 12:00,2012-12-06 12:00,,PT_Normal,,,,,+y9QSjYsAkSQkOIa7Vf/Zg,HpEj9IuMTkSNMW2leNhO7Q,,,N,0,0,,,2013-11-05 11:09,2013-11-05 11:09,admin,admin,
207,101924,4512,26130,6590,0,N,N,N,CP_Drtn,TT_Task,DT_FixedDUR2,TK_NotStart,JF721.199,Bevelling/Rolling,,784,0,48,0,0,0,48,0,0,0,,,,2012-12-04 08:00,2012-12-09 11:00,,2012-09-09 09:00,2012-09-13 17:00,2012-09-09 09:00,2012-09-13 17:00,2012-09-09 09:00,2012-09-13 17:00,2012-12-04 08:00,2012-12-09 11:00,,PT_Normal,,,,,Eqny3qy8HEWAyQ/MeT2nAQ,cYzpiAMs+0KOa/HVaZX2AA,,,N,0,0,,,2013-11-05 11:09,2013-11-05 11:09,admin,admin,
208,101925,4512,26130,6590,0,N,N,N,CP_Drtn,TT_Task,DT_FixedDUR2,TK_NotStart,JF721.200,Shop Blasting/Painting,,784,0,48,0,0,0,48,0,0,0,,,,2012-12-06 12:00,2012-12-11 15:00,,2012-09-11 13:00,2012-09-16 16:00,2012-09-11 13:00,2012-09-16 16:00,2012-09-11 13:00,2012-09-16 16:00,2012-12-06 12:00,2012-12-11 15:00,,PT_Normal,,,,,VPYzegllDEau8ev5ruk43Q,7HNi5PeaV0y2Y2hivMcf9w,,,N,0,0,,,2013-11-05 11:09,2013-11-05 11:09,admin,admin,
209,101926,4512,26130,6590,0,N,N,N,CP_Drtn,TT_Task,DT_FixedDUR2,TK_NotStart,JF721.201,Inspect & Accept for use,,784,0,32,0,0,0,32,0,0,0,,,,2012-12-11 15:00,2012-12-15 12:00,,2012-09-16 16:00,2012-09-20 08:00,2012-09-16 16:00,2012-09-20 08:00,2012-09-16 16:00,2012-09-20 08:00,2012-12-11 15:00,2012-12-15 12:00,,PT_Normal,,,,,BKouNRFCgkWxg3njTVP03g,2GHiYf/TR0Koqh0FB+0+zg,,,N,0,0,,,2013-11-05 11:09,2013-11-05 11:09,admin,admin,
210,101927,4512,26090,6590,0,N,N,N,CP_Drtn,TT_Task,DT_FixedDUR2,TK_NotStart,JF721.202,Define layout,,1184,0,24,0,0,0,24,0,0,0,,,,2013-01-19 15:00,2013-01-22 09:00,,2012-09-12 11:00,2012-09-15 10:00,2012-09-12 11:00,2012-09-15 10:00,2012-09-12 11:00,2012-09-15 10:00,2013-01-19 15:00,2013-01-22 09:00,,PT_Normal,,,,,4dmTyPN1EkyggEGZii6rAg,BObSzZpwSEyt71E/AtUl6w,,,N,0,0,,,2013-11-05 11:09,2013-11-05 11:09,admin,admin,
211,101928,4512,26090,6590,0,N,N,N,CP_Drtn,TT_Task,DT_FixedDUR2,TK_NotStart,JF721.203,Cutting,,1184,0,32,0,0,0,32,0,0,0,,,,2013-01-22 09:00,2013-01-25 13:30,,2012-09-15 10:00,2012-09-18 12:00,2012-09-15 10:00,2012-09-18 12:00,2012-09-15 10:00,2012-09-18 12:00,2013-01-22 09:00,2013-01-25 13:30,,PT_Normal,,,,,IeRSTXvefUO3jVmPsa3z6Q,AmRQTCoh50qjBmbNOJIlPA,,,N,0,0,,,2013-11-05 11:09,2013-11-05 11:09,admin,admin,
212,101929,4512,26090,6590,0,N,N,N,CP_Drtn,TT_Task,DT_FixedDUR2,TK_NotStart,JF721.204,Bevelling,,1184,0,40,0,0,0,40,0,0,0,,,,2013-01-23 07:00,2013-01-27 11:00,,2012-09-16 08:00,2012-09-20 08:00,2012-09-16 08:00,2012-09-20 08:00,2012-09-16 08:00,2012-09-20 08:00,2013-01-23 07:00,2013-01-27 11:00,,PT_Normal,,,,,diNOIK8eF0eW7Ky00MWg/w,yFpHDPcaYUWOe29l70K2vw,,,N,0,0,,,2013-11-05 11:09,2013-11-05 11:09,admin,admin,
213,101930,4512,26090,6590,0,N,N,N,CP_Drtn,TT_Task,DT_FixedDUR2,TK_NotStart,JF721.205,Fit-up/Welding,,1184,0,48,0,0,0,48,0,0,0,,,,2013-01-24 13:00,2013-01-29 08:00,,2012-09-17 14:00,2012-09-22 17:00,2012-09-17 14:00,2012-09-22 17:00,2012-09-17 14:00,2012-09-22 17:00,2013-01-24 13:00,2013-01-29 08:00,,PT_Normal,,,,,hem3k+KEN06DwUtxfe+6gg,qSE5Fing/0mvKJhg5mIVeA,,,N,0,0,,,2013-11-05 11:09,2013-11-05 11:09,admin,admin,
214,101931,4512,26090,6590,0,N,N,N,CP_Drtn,TT_Task,DT_FixedDUR2,TK_NotStart,JF721.206,Blasting/Painting,,1184,0,56,0,0,0,56,0,0,0,,,,2013-01-27 11:00,2013-02-01 12:30,,2012-09-20 08:00,2012-09-26 09:00,2012-09-20 08:00,2012-09-26 09:00,2012-09-20 08:00,2012-09-26 09:00,2013-01-27 11:00,2013-02-01 12:30,,PT_Normal,,,,,uChJgsB9Pkq6MUXtRjkS/g,P4/Fk4uRBEatogu64eu/Nw,,,N,0,0,,,2013-11-05 11:09,2013-11-05 11:09,admin,admin,
215,101932,4512,26090,6590,0,N,N,N,CP_Drtn,TT_Task,DT_FixedDUR2,TK_NotStart,JF721.207,Inspect & Accept for use,,1184,0,24,0,0,0,24,0,0,0,,,,2013-02-01 12:30,2013-02-04 09:00,,2012-09-26 09:00,2012-09-29 08:00,2012-09-26 09:00,2012-09-29 08:00,2012-09-26 09:00,2012-09-29 08:00,2013-02-01 12:30,2013-02-04 09:00,,PT_Normal,,,,,AJA3GvfB/0m+o6Om4lgBWA,mf4ZiKwzEkWAlgfh/a1UzQ,,,N,0,0,,,2013-11-05 11:09,2013-11-05 11:09,admin,admin,
216,101933,4512,26091,6590,0,N,N,N,CP_Drtn,TT_Task,DT_FixedDUR2,TK_NotStart,JF721.188,Plates,,352,0,736,0,0,0,736,0,0,0,,,,2012-09-02 10:00,2012-11-21 16:00,,2012-07-23 08:00,2012-10-13 14:00,2012-07-23 08:00,2012-10-13 14:00,2012-07-23 08:00,2012-10-13 14:00,2012-09-02 10:00,2012-11-21 16:00,,PT_Normal,,,,,LfEcX8eBOUGVsIT/iwVyOg,p4b5Mw6c2Uau5vTANZNEzw,,,N,0,0,,,2013-11-05 11:09,2013-11-05 11:09,admin,admin,
217,101934,4512,26091,6590,0,N,N,N,CP_Drtn,TT_Task,DT_FixedDUR2,TK_NotStart,JF721.189,Profile Material,,1184,0,240,0,0,0,240,0,0,0,,,,2012-12-24 15:00,2013-01-19 15:00,,2012-08-14 11:00,2012-09-12 11:00,2012-08-14 11:00,2012-09-12 11:00,2012-08-14 11:00,2012-09-12 11:00,2012-12-24 15:00,2013-01-19 15:00,,PT_Normal,,,,,TvOZlx1OU0utYF0q3lgL0Q,XvbN9j8Um0u+a5vi4V340A,,,N,0,0,,,2013-11-05 11:09,2013-11-05 11:09,admin,admin,
218,101935,4512,26091,6590,0,N,N,N,CP_Drtn,TT_Task,DT_FixedDUR2,TK_NotStart,JF721.190,Pipes & Fittings,,560,0,136,0,0,0,136,0,0,0,,,,2012-10-09 09:00,2012-10-23 15:00,,2012-08-06 14:00,2012-08-24 12:30,2012-08-06 14:00,2012-08-24 12:30,2012-08-06 14:00,2012-08-24 12:30,2012-10-09 09:00,2012-10-23 15:00,,PT_Normal,,,,,sBdPq7bi4kKblzE6LjcqCQ,xlcN0EV8I0SapJEwHcmzTg,,,N,0,0,,,2013-11-05 11:09,2013-11-05 11:09,admin,admin,
219,101936,4512,26092,6590,0,N,N,N,CP_Drtn,TT_Task,DT_FixedDUR2,TK_NotStart,JF721.166,PO Issued,,384,0,24,0,0,0,24,0,0,0,,,,2012-08-12 07:00,2012-08-14 11:00,,2012-07-01 13:00,2012-07-03 17:00,2012-07-01 13:00,2012-07-03 17:00,2012-07-01 13:00,2012-07-03 17:00,2012-08-12 07:00,2012-08-14 11:00,,PT_Normal,,,,,qEl2rk3OQEa/32PbqFuGOA,zCk7aObfCUGOntxgxjFmMQ,,,N,0,0,,,2013-11-05 11:09,2013-11-05 11:09,admin,admin,
220,101937,4512,26092,6590,0,N,N,N,CP_Drtn,TT_Task,DT_FixedDUR2,TK_NotStart,JF721.167,Ma'aden Site Delievery,,384,0,56,0,0,0,56,0,0,0,,,,2012-08-14 11:00,2012-08-23 12:00,,2012-07-04 07:00,2012-07-10 08:00,2012-07-04 07:00,2012-07-10 08:00,2012-07-04 07:00,2012-07-10 08:00,2012-08-14 11:00,2012-08-23 12:00,,PT_Normal,,,,,N6jiX6etaUGzyLdmbSWvWg,6oHrZtG370unhirho4VupA,,,N,0,0,,,2013-11-05 11:09,2013-11-05 11:09,admin,admin,
221,101938,4512,26093,6590,0,N,N,N,CP_Drtn,TT_Task,DT_FixedDUR2,TK_NotStart,JF721.168,Approval for Vendor Drawings & SPecifications,,560,0,24,0,0,0,24,0,0,0,,,,2012-09-26 09:00,2012-09-29 08:00,,2012-07-24 14:00,2012-07-27 10:30,2012-07-24 14:00,2012-07-27 10:30,2012-07-24 14:00,2012-07-27 10:30,2012-09-26 09:00,2012-09-29 08:00,,PT_Normal,,,,,glphV0i5aUaDtQ310O9GZg,6r11gtJdnUe/59WOKiaHmQ,,,N,0,0,,,2013-11-05 11:09,2013-11-05 11:09,admin,admin,
222,101939,4512,26093,6590,0,N,N,N,CP_Drtn,TT_Task,DT_FixedDUR2,TK_NotStart,JF721.169,PO Issued,,1272,0,216,0,0,0,216,0,0,0,,,,2012-12-16 10:00,2013-01-08 11:00,,2012-07-27 10:30,2012-08-22 14:00,2012-07-27 10:30,2012-08-22 14:00,2012-07-27 10:30,2012-08-22 14:00,2012-12-16 10:00,2013-01-08 11:00,,PT_Normal,,,,,9bAvRHyKsUumjjZgq2IR5w,NmLAcJcOhUaoeMu+fvzAow,,,N,0,0,,,2013-11-05 11:09,2013-11-05 11:09,admin,admin,
223,101940,4512,26093,6590,0,N,N,N,CP_Drtn,TT_Task,DT_FixedDUR2,TK_NotStart,JF721.170,CP System Delievered to Ma'aden Site & Installed,6942,352,0,160,0,1440,1440,160,640,0,640,,,,2013-05-31 11:30,2013-06-17 14:00,,2013-04-23 12:00,2013-05-10 14:30,2013-04-23 12:00,2013-05-10 14:30,2013-04-23 12:00,2013-05-10 14:30,2013-05-31 11:30,2013-06-17 14:00,,PT_Normal,,,,,ybBVgTZhyEWqN4JkOdQ6VA,+o+DyVVQ/kCd+4ON0641Rw,,,N,0,0,,,2013-11-05 11:09,2013-11-05 11:09,admin,admin,
224,101941,4512,26093,6590,0,N,N,N,CP_Drtn,TT_Task,DT_FixedDUR2,TK_NotStart,JF721.171,Ma'aden CP Inspection,6965,352,0,24,0,80,80,24,40,0,40,,,,2013-06-17 14:00,2013-06-20 08:00,,2013-05-11 07:00,2013-05-13 11:00,2013-05-11 07:00,2013-05-13 11:00,2013-05-11 07:00,2013-05-13 11:00,2013-06-17 14:00,2013-06-20 08:00,,PT_Normal,,,,,NWmrbjrw0kWW4yAVYavUWQ,DX4s+DB7hUuHMSWuFd396Q,,,N,0,0,,,2013-11-05 11:09,2013-11-05 11:09,admin,admin,
225,101942,4512,26135,6590,0,N,N,N,CP_Drtn,TT_Task,DT_FixedDUR2,TK_NotStart,JF721.208,Define Layout,,1352,0,40,0,0,0,40,0,0,0,,,,2013-02-16 11:00,2013-02-20 11:00,,2012-09-23 07:00,2012-09-26 17:00,2012-09-23 07:00,2012-09-26 17:00,2012-09-23 07:00,2012-09-26 17:00,2013-02-16 11:00,2013-02-20 11:00,,PT_Normal,,,,,APCGXXfPHEGrSrdHAJ1j1Q,4EwGlVvj1Euqj7jLBXyyvw,,,N,0,0,,,2013-11-05 11:09,2013-11-05 11:09,admin,admin,
226,101943,4512,26135,6590,0,N,N,N,CP_Drtn,TT_Task,DT_FixedDUR2,TK_NotStart,JF721.209,Cutting,,1352,0,56,0,0,0,56,0,0,0,,,,2013-02-20 11:00,2013-02-26 12:00,,2012-09-27 07:00,2012-10-03 08:00,2012-09-27 07:00,2012-10-03 08:00,2012-09-27 07:00,2012-10-03 08:00,2013-02-20 11:00,2013-02-26 12:00,,PT_Normal,,,,,mk+YTgjO9kSCNeQDqHyFPw,FnjnSPuQ8EGpxBoPL3gghg,,,N,0,0,,,2013-11-05 11:09,2013-11-05 11:09,admin,admin,
227,101944,4512,26135,6590,0,N,N,N,CP_Drtn,TT_Task,DT_FixedDUR2,TK_NotStart,JF721.210,Fit-Up,,1352,0,80,0,0,0,80,0,0,0,,,,2013-02-26 12:00,2013-03-06 17:00,,2012-10-03 08:00,2012-10-11 13:00,2012-10-03 08:00,2012-10-11 13:00,2012-10-03 08:00,2012-10-11 13:00,2013-02-26 12:00,2013-03-06 17:00,,PT_Normal,,,,,Eiko8xSFK0y6GwIq2z+T2g,2Avp9YRmPUmCASJKMgeCLg,,,N,0,0,,,2013-11-05 11:09,2013-11-05 11:09,admin,admin,
228,101945,4512,26135,6590,0,N,N,N,CP_Drtn,TT_Task,DT_FixedDUR2,TK_NotStart,JF721.211,Welding,,1352,0,56,0,0,0,56,0,0,0,,,,2013-03-07 07:00,2013-03-13 08:00,,2012-10-11 13:00,2012-10-17 14:00,2012-10-11 13:00,2012-10-17 14:00,2012-10-11 13:00,2012-10-17 14:00,2013-03-07 07:00,2013-03-13 08:00,,PT_Normal,,,,,EIxSAFMKLEmVm5zNf1FFNA,fKb7wQneJkSqokYzrd7Ntg,,,N,0,0,,,2013-11-05 11:09,2013-11-05 11:09,admin,admin,
229,101946,4512,26135,6590,0,N,N,N,CP_Drtn,TT_Task,DT_FixedDUR2,TK_NotStart,JF721.212,Blasting/Painting,,1352,0,56,0,0,0,56,0,0,0,,,,2013-03-12 10:00,2013-03-18 11:00,,2012-10-16 16:00,2012-10-22 17:00,2012-10-16 16:00,2012-10-22 17:00,2012-10-16 16:00,2012-10-22 17:00,2013-03-12 10:00,2013-03-18 11:00,,PT_Normal,,,,,Og3BJsKH6UeR4N9ggugKZw,BwP2ymGIUU+c2fXN6sVgJg,,,N,0,0,,,2013-11-05 11:09,2013-11-05 11:09,admin,admin,
230,101947,4512,26135,6590,0,N,N,N,CP_Drtn,TT_Task,DT_FixedDUR2,TK_NotStart,JF721.213,Inspect & Accept for use,,1352,0,32,0,0,0,32,0,0,0,,,,2013-03-18 11:00,2013-03-21 13:00,,2012-10-23 07:00,2012-10-28 09:00,2012-10-23 07:00,2012-10-28 09:00,2012-10-23 07:00,2012-10-28 09:00,2013-03-18 11:00,2013-03-21 13:00,,PT_Normal,,,,,hFmtstXYBUi89yQbUf9Qhw,o+wMiGtSoUKh2J48Anp8Dw,,,N,0,0,,,2013-11-05 11:09,2013-11-05 11:09,admin,admin,
231,101948,4512,26095,6590,0,N,N,N,CP_Drtn,TT_Task,DT_FixedDUR2,TK_NotStart,JF721.214,"Annular,Bottom & Sump",,352,0,24,0,0,0,24,0,0,0,,,,2012-10-24 13:00,2012-10-28 17:00,,2012-09-16 16:00,2012-09-19 10:00,2012-09-16 16:00,2012-09-19 10:00,2012-09-16 16:00,2012-09-19 10:00,2012-10-24 13:00,2012-10-28 17:00,,PT_Normal,,,,,Yyfn5vn+D0aGchbEe99tEQ,aL93bd7K20m30+6GK2mPUA,,,N,0,0,,,2013-11-05 11:09,2013-11-05 11:09,admin,admin,
232,101949,4512,26095,6590,0,N,N,N,CP_Drtn,TT_Task,DT_FixedDUR2,TK_NotStart,JF721.215,"Shell Courses #1,#2,#3,#4",,784,432,64,0,0,0,64,0,0,0,,,,2012-12-15 12:00,2012-12-22 11:00,,2012-09-20 08:00,2012-09-26 17:00,2012-09-20 08:00,2012-09-26 17:00,2012-09-20 08:00,2012-09-26 17:00,2012-12-15 12:00,2012-12-22 11:00,,PT_Normal,,,,,RqMZdxCffkSFbo4Ocj0WNg,mb+jkI/ywU6UywP62LUheA,,,N,0,0,,,2013-11-05 11:09,2013-11-05 11:09,admin,admin,
233,101950,4512,26095,6590,0,N,N,N,CP_Drtn,TT_Task,DT_FixedDUR2,TK_NotStart,JF721.216,Shell Nozzles & Manholes,,1184,832,48,0,0,0,48,0,0,0,,,,2013-02-04 09:00,2013-02-09 12:00,,2012-09-29 08:00,2012-10-03 16:00,2012-09-29 08:00,2012-10-03 16:00,2012-09-29 08:00,2012-10-03 16:00,2013-02-04 09:00,2013-02-09 12:00,,PT_Normal,,,,,xIreRfZO4EWWGxFIubiNNw,bYPwWiI3GUaFTpFne1xHmA,,,N,0,0,,,2013-11-05 11:09,2013-11-05 11:09,admin,admin,
234,101951,4512,26095,6590,0,N,N,N,CP_Drtn,TT_Task,DT_FixedDUR2,TK_NotStart,JF721.217,"Platforms,Stairs & Handrails",,1352,1000,64,0,0,0,64,0,0,0,,,,2013-03-21 13:00,2013-03-28 12:00,,2012-10-28 09:00,2012-11-04 08:00,2012-10-28 09:00,2012-11-04 08:00,2012-10-28 09:00,2012-11-04 08:00,2013-03-21 13:00,2013-03-28 12:00,,PT_Normal,,,,,hX3AI2umUEymqxn198rjUg,dfbbgYeH70W47Yg9e8OhUw,,,N,0,0,,,2013-11-05 11:09,2013-11-05 11:09,admin,admin,
235,101952,4512,26095,6590,0,N,N,N,CP_Drtn,TT_Task,DT_FixedDUR2,TK_NotStart,JF721.218,Pipes & Fittings,,560,0,32,0,0,0,32,0,0,0,,,,2012-10-23 15:00,2012-10-28 17:00,,2012-08-24 12:30,2012-08-27 17:00,2012-08-24 12:30,2012-08-27 17:00,2012-08-24 12:30,2012-08-27 17:00,2012-10-23 15:00,2012-10-28 17:00,,PT_Normal,,,,,ya5rSYAuuke5X1I/wzKmWw,kpaaWoNQ0Ue6jietlQ5Z5Q,,,N,0,0,,,2013-11-05 11:09,2013-11-05 11:09,admin,admin,
236,101953,4512,26095,6590,0,N,N,N,CP_Drtn,TT_Task,DT_FixedDUR2,TK_NotStart,JF721.219,Aluminum Dome Roof,,1272,920,736.016667,0,0,0,736.016667,0,0,0,,,,2013-01-08 11:00,2013-03-27 14:01,,2012-08-22 14:00,2012-11-11 15:01,2012-08-22 14:00,2012-11-11 15:01,2012-08-22 14:00,2012-11-11 15:01,2013-01-08 11:00,2013-03-27 14:01,,PT_Normal,,,,,Vi5lDV4ZnU+5347gj+9n1g,fvBVTZnUAEe8LmzFstdm6w,,,N,0,0,,,2013-11-05 11:09,2013-11-05 11:09,admin,admin,
237,101954,4512,26095,6590,0,N,N,N,CP_Drtn,TT_Task,DT_FixedDUR2,TK_NotStart,JF721.220,Paint Material,,648,88,32,0,0,0,32,0,0,0,,,,2012-10-23 15:00,2012-10-28 17:00,,2012-08-12 07:00,2012-08-15 09:00,2012-08-12 07:00,2012-08-15 09:00,2012-08-12 07:00,2012-08-15 09:00,2012-10-23 15:00,2012-10-28 17:00,,PT_Normal,,,,,dQunSk2zpk++a5JoCiJ8qQ,NMnPTBgk00ygxxX6Jhgwmg,,,N,0,0,,,2013-11-05 11:09,2013-11-05 11:09,admin,admin,
238,101955,4512,26096,6590,0,N,N,N,CP_Drtn,TT_FinMile,DT_FixedDrtn,TK_NotStart,2.5,"Material Requisition approval for Steel plates, Cathodic Protection, field instruments etc.",,560,0,0,0,0,0,0,0,0,0,,,,2012-09-29 08:00,2012-09-29 08:00,,2012-07-27 10:30,2012-07-27 10:30,2012-07-27 10:30,2012-07-27 10:30,2012-07-27 10:30,2012-07-27 10:30,2012-09-29 08:00,2012-09-29 08:00,,PT_Normal,,,,,g9O0Ytx+lUWWMwPMlRXWWQ,D5gGLR/qa02xQYEG0L+bdQ,,,N,0,0,,,2013-11-05 11:09,2013-11-05 11:09,admin,admin,
239,101956,4512,26097,6590,0,N,N,N,CP_Drtn,TT_FinMile,DT_FixedDrtn,TK_NotStart,2.6,Purchase Order placement for Major Materials,,1272,0,0,0,0,0,0,0,0,0,,,,2013-01-08 11:00,2013-01-08 11:00,,2012-08-22 14:00,2012-08-22 14:00,2012-08-22 14:00,2012-08-22 14:00,2012-08-22 14:00,2012-08-22 14:00,2013-01-08 11:00,2013-01-08 11:00,,PT_Normal,,,,,3ZXZVzRNbkaRnyg0fFRXAw,HIEpMWnkHUm90Oy+flON2A,,,N,0,0,,,2013-11-05 11:09,2013-11-05 11:09,admin,admin,
240,101957,4512,26098,6590,0,N,N,N,CP_Drtn,TT_FinMile,DT_FixedDrtn,TK_NotStart,2.11,Complete Installation of Cathodic Protection,,352,0,0,0,0,0,0,0,0,0,,,,2013-06-20 08:00,2013-06-20 08:00,,2013-05-13 11:00,2013-05-13 11:00,2013-05-13 11:00,2013-05-13 11:00,2013-05-13 11:00,2013-05-13 11:00,2013-06-20 08:00,2013-06-20 08:00,,PT_Normal,,,,,UswmUjZvQk2Qp3bJrl+TeQ,,,,N,0,0,,,2013-11-05 11:09,2013-11-05 11:09,admin,admin,
241,101958,4512,26099,6590,0,N,N,N,CP_Drtn,TT_FinMile,DT_FixedDrtn,TK_NotStart,2.8,Supply of MAterial to Site,,560,208,0,0,0,0,0,0,0,0,,,,2012-10-28 17:00,2012-10-28 17:00,,2012-08-27 17:00,2012-08-27 17:00,2012-08-27 17:00,2012-08-27 17:00,2012-08-27 17:00,2012-08-27 17:00,2012-10-28 17:00,2012-10-28 17:00,,PT_Normal,,,,,v2AG7bs9+ESyMZ/dnEk2gA,,,,N,0,0,,,2013-11-05 11:09,2013-11-05 11:09,admin,admin,
242,101959,4512,26141,6590,0,N,N,N,CP_Drtn,TT_FinMile,DT_FixedDrtn,TK_NotStart,2.12,Complete Installation for instruments,,352,0,0,0,0,0,0,0,0,0,,,,2013-07-16 16:00,2013-07-16 16:00,,2013-06-09 09:00,2013-06-09 09:00,2013-06-09 09:00,2013-06-09 09:00,2013-06-09 09:00,2013-06-09 09:00,2013-07-16 16:00,2013-07-16 16:00,,PT_Normal,,,,,Fep/Jh9iq0q7rJjBERu/6Q,,,,N,0,0,,,2013-11-05 11:09,2013-11-05 11:09,admin,admin,
243,101960,4512,26143,6590,0,N,N,N,CP_Drtn,TT_Task,DT_FixedDUR2,TK_NotStart,JF721.242,Prepare Shell Course # 2 for Erection,6951,352,0,32,0,190,190,32,30,0,30,,,,2012-12-30 08:00,2013-01-02 10:00,,2012-11-21 16:00,2012-11-25 13:00,2012-11-21 16:00,2012-11-25 13:00,2012-11-21 16:00,2012-11-25 13:00,2012-12-30 08:00,2013-01-02 10:00,,PT_Normal,,,,,Tzn4/qip60iQZGw/cToXGA,znGT1AiRzUexYVr8dhKCng,,,N,0,0,,,2013-11-05 11:09,2013-11-05 11:09,admin,admin,
244,101961,4512,26143,6590,0,N,N,N,CP_Drtn,TT_Task,DT_FixedDUR2,TK_NotStart,JF721.243,Erect & Tack Shell Course # 2,6951,352,0,40,0,300,300,40,80,0,80,,,,2013-01-02 10:00,2013-01-06 15:00,,2012-11-25 13:00,2012-11-29 13:00,2012-11-25 13:00,2012-11-29 13:00,2012-11-25 13:00,2012-11-29 13:00,2013-01-02 10:00,2013-01-06 15:00,,PT_Normal,,,,,KvrqZeihg0S4wrNJaBjGSQ,S0FZWc0Rh0uCp9rpJu0UFw,,,N,0,0,,,2013-11-05 11:09,2013-11-05 11:09,admin,admin,
245,101962,4512,26143,6590,0,N,N,N,CP_Drtn,TT_Task,DT_FixedDUR2,TK_NotStart,JF721.244,Weld Outer Vertical Seam,6935,352,0,48,0,660,660,48,360,0,360,,,,2013-01-03 08:00,2013-01-08 11:00,,2012-11-26 11:00,2012-12-01 14:00,2012-11-26 11:00,2012-12-01 14:00,2012-11-26 11:00,2012-12-01 14:00,2013-01-03 08:00,2013-01-08 11:00,,PT_Normal,,,,,mWyEPqNHsECu880lK11RIQ,02x2RGlq8UyrSQ1smyHvXA,,,N,0,0,,,2013-11-05 11:09,2013-11-05 11:09,admin,admin,
246,101963,4512,26143,6590,0,N,N,N,CP_Drtn,TT_Task,DT_FixedDUR2,TK_NotStart,JF721.245,Backgouge & NDT Inside Vertical Seam,6964,352,0,40,0,220,220,40,40,0,40,,,,2013-01-03 16:00,2013-01-08 11:00,,2012-11-27 09:00,2012-12-01 14:00,2012-11-27 09:00,2012-12-01 14:00,2012-11-27 09:00,2012-12-01 14:00,2013-01-03 16:00,2013-01-08 11:00,,PT_Normal,,,,,XmR16V/HakWmoa/bccUrkQ,OTH2MBl8/0+b90QwPRl6HA,,,N,0,0,,,2013-11-05 11:09,2013-11-05 11:09,admin,admin,
247,101964,4512,26143,6590,0,N,N,N,CP_Drtn,TT_Task,DT_FixedDUR2,TK_NotStart,JF721.246,Weld Inside Vertical Seam,6935,352,0,40,0,460,460,40,280,0,280,,,,2013-01-05 09:00,2013-01-09 09:00,,2012-11-28 07:00,2012-12-02 12:00,2012-11-28 07:00,2012-12-02 12:00,2012-11-28 07:00,2012-12-02 12:00,2013-01-05 09:00,2013-01-09 09:00,,PT_Normal,,,,,2UIvHSGz2k+bOMZg02yrdA,RfSppuVpEkauvhzPvVlSOQ,,,N,0,0,,,2013-11-05 11:09,2013-11-05 11:09,admin,admin,
248,101965,4512,26143,6590,0,N,N,N,CP_Drtn,TT_Task,DT_FixedDUR2,TK_NotStart,JF721.247,"""""Fit & Tack Horizontal Seam between Shell Course # 1 & 2""""",6942,352,0,40,0,400,400,40,120,0,120,,,,2013-01-06 07:00,2013-01-09 17:00,,2012-11-28 15:00,2012-12-03 10:00,2012-11-28 15:00,2012-12-03 10:00,2012-11-28 15:00,2012-12-03 10:00,2013-01-06 07:00,2013-01-09 17:00,,PT_Normal,,,,,fRi++1wIUE2I1Hy5cmMF8A,i+siZMRFOEWWPhpzGgTm/A,,,N,0,0,,,2013-11-05 11:09,2013-11-05 11:09,admin,admin,
249,101966,4512,26143,6590,0,N,N,N,CP_Drtn,TT_Task,DT_FixedDUR2,TK_NotStart,JF721.248,"""""Weld Outer Horizontal Seam between Shell Course # 1 & 2""""",6942,352,0,56,0,1200,1200,56,680,0,680,,,,2013-01-06 15:00,2013-01-12 16:00,,2012-11-29 13:00,2012-12-05 14:00,2012-11-29 13:00,2012-12-05 14:00,2012-11-29 13:00,2012-12-05 14:00,2013-01-06 15:00,2013-01-12 16:00,,PT_Normal,,,,,EiaJeX4EEUCN0qcauOCpvw,nmGtj9Je2EqNDoqQVv1N1g,,,N,0,0,,,2013-11-05 11:09,2013-11-05 11:09,admin,admin,
250,101967,4512,26143,6590,0,N,N,N,CP_Drtn,TT_Task,DT_FixedDUR2,TK_NotStart,JF721.249,"""""Backgouge & NDT Inside Horizontal Seam between Shell Course# 1 & 2""""",6935,352,0,40,0,320,320,40,40,0,40,,,,2013-01-07 13:00,2013-01-12 08:00,,2012-11-30 13:30,2012-12-04 16:00,2012-11-30 13:30,2012-12-04 16:00,2012-11-30 13:30,2012-12-04 16:00,2013-01-07 13:00,2013-01-12 08:00,,PT_Normal,,,,,Jaq2cKqYjEmDsm/OuGIWFA,sy+IrWUhXkughQFX+iL5XA,,,N,0,0,,,2013-11-05 11:09,2013-11-05 11:09,admin,admin,
251,101968,4512,26143,6590,0,N,N,N,CP_Drtn,TT_Task,DT_FixedDUR2,TK_NotStart,JF721.250,"Weld Inner Horizontal Seam between Shell Course # 1 & 2""""",6935,352,0,40,0,600,600,40,340,0,340,,,,2013-01-08 11:00,2013-01-12 16:00,,2012-12-01 14:00,2012-12-05 14:00,2012-12-01 14:00,2012-12-05 14:00,2012-12-01 14:00,2012-12-05 14:00,2013-01-08 11:00,2013-01-12 16:00,,PT_Normal,,,,,Oy9UmNg2VEStQMB0arp7Yw,V2cmtQD/9kqksXaVitT7Pg,,,N,0,0,,,2013-11-05 11:09,2013-11-05 11:09,admin,admin,
252,101969,4512,26103,6590,0,N,N,N,CP_Drtn,TT_Task,DT_FixedDUR2,TK_NotStart,JF721.251,Prepare Shell Course # 3 for Erection,6942,352,0,40,0,180,180,40,30,0,30,,,,2013-01-08 11:00,2013-01-12 16:00,,2012-12-01 14:00,2012-12-05 14:00,2012-12-01 14:00,2012-12-05 14:00,2012-12-01 14:00,2012-12-05 14:00,2013-01-08 11:00,2013-01-12 16:00,,PT_Normal,,,,,5kmZzEUn2EWc6COKhmKe0w,0dF8XEJAR0um2y0CtZrHCA,,,N,0,0,,,2013-11-05 11:09,2013-11-05 11:09,admin,admin,
253,101970,4512,26103,6590,0,N,N,N,CP_Drtn,TT_Task,DT_FixedDUR2,TK_NotStart,JF721.252,Erect & Tack Shell Course # 3,6951,352,0,40,0,360,360,40,140,0,140,,,,2013-01-12 16:00,2013-01-16 16:00,,2012-12-05 14:00,2012-12-10 09:00,2012-12-05 14:00,2012-12-10 09:00,2012-12-05 14:00,2012-12-10 09:00,2013-01-12 16:00,2013-01-16 16:00,,PT_Normal,,,,,P6kYcQ0IsUiK6wxHBEUv9g,zAQOLeothkewiBEgPtyU3w,,,N,0,0,,,2013-11-05 11:09,2013-11-05 11:09,admin,admin,
254,101971,4512,26103,6590,0,N,N,N,CP_Drtn,TT_Task,DT_FixedDUR2,TK_NotStart,JF721.253,Weld Outer Vertical Seam,6965,352,0,48,0,645,645,48,420,0,420,,,,2013-01-13 14:00,2013-01-18 14:30,,2012-12-06 12:00,2012-12-11 15:00,2012-12-06 12:00,2012-12-11 15:00,2012-12-06 12:00,2012-12-11 15:00,2013-01-13 14:00,2013-01-18 14:30,,PT_Normal,,,,,u27XnwsIS0+g3m1aAa47ZQ,vwMCXD/taEyiVqs1zuTkSg,,,N,0,0,,,2013-11-05 11:09,2013-11-05 11:09,admin,admin,
255,101972,4512,26103,6590,0,N,N,N,CP_Drtn,TT_Task,DT_FixedDUR2,TK_NotStart,JF721.254,Backgouge & NDT Inside Vertical Seam,6942,352,0,40,0,260,260,40,40,0,40,,,,2013-01-14 12:00,2013-01-18 14:30,,2012-12-07 12:30,2012-12-11 15:00,2012-12-07 12:30,2012-12-11 15:00,2012-12-07 12:30,2012-12-11 15:00,2013-01-14 12:00,2013-01-18 14:30,,PT_Normal,,,,,ZPfsNaWnt0ifDKLzwL3+dw,FkRXA7HHrUuzrqNxnnIPWQ,,,N,0,0,,,2013-11-05 11:09,2013-11-05 11:09,admin,admin,
256,101973,4512,26103,6590,0,N,N,N,CP_Drtn,TT_Task,DT_FixedDUR2,TK_NotStart,JF721.255,Weld Inside Vertical Seam,6942,352,0,40,0,440,440,40,220,0,220,,,,2013-01-15 10:00,2013-01-19 15:00,,2012-12-08 13:00,2012-12-12 13:00,2012-12-08 13:00,2012-12-12 13:00,2012-12-08 13:00,2012-12-12 13:00,2013-01-15 10:00,2013-01-19 15:00,,PT_Normal,,,,,1eha6g24qkCRzqH3IqXySQ,Z68p+vy+CEihIDlquyT8Bw,,,N,0,0,,,2013-11-05 11:09,2013-11-05 11:09,admin,admin,
257,101974,4512,26103,6590,0,N,N,N,CP_Drtn,TT_Task,DT_FixedDUR2,TK_NotStart,JF721.256,"""""Fit & Tack Horizontal Seam between Shell Course # 2 & 3""""",6942,352,0,40,0,300,300,40,80,0,80,,,,2013-01-16 08:00,2013-01-20 13:00,,2012-12-09 11:00,2012-12-13 11:00,2012-12-09 11:00,2012-12-13 11:00,2012-12-09 11:00,2012-12-13 11:00,2013-01-16 08:00,2013-01-20 13:00,,PT_Normal,,,,,+hTqGsOfHkWMo+mVIfFwRQ,yO4QpAPPZUm/ZuKMLUlwxA,,,N,0,0,,,2013-11-05 11:09,2013-11-05 11:09,admin,admin,
258,101975,4512,26103,6590,0,N,N,N,CP_Drtn,TT_Task,DT_FixedDUR2,TK_NotStart,JF721.257,"""""Weld Outer Horizontal Seam between Shell Course # 2 & 3""""",6942,352,0,56,0,760,760,56,440,0,440,,,,2013-01-16 16:00,2013-01-22 17:00,,2012-12-10 09:00,2012-12-16 10:00,2012-12-10 09:00,2012-12-16 10:00,2012-12-10 09:00,2012-12-16 10:00,2013-01-16 16:00,2013-01-22 17:00,,PT_Normal,,,,,QTwr0wR4sk+nBAdNBz82Pw,FqAnNlhx/Uaj83WHY9IKxg,,,N,0,0,,,2013-11-05 11:09,2013-11-05 11:09,admin,admin,
259,101976,4512,26103,6590,0,N,N,N,CP_Drtn,TT_Task,DT_FixedDUR2,TK_NotStart,JF721.258,"""""Backgouge & NDT Inside Horizontal Seam between Shell Course# 2 & 3""""",6942,352,0,40,0,220,220,40,40,0,40,,,,2013-01-17 14:00,2013-01-22 09:00,,2012-12-11 07:00,2012-12-15 12:00,2012-12-11 07:00,2012-12-15 12:00,2012-12-11 07:00,2012-12-15 12:00,2013-01-17 14:00,2013-01-22 09:00,,PT_Normal,,,,,ThSHY9k98UymW6o/JVK3pg,9YqBeljKO0qZKYRZnZ9kzA,,,N,0,0,,,2013-11-05 11:09,2013-11-05 11:09,admin,admin,
260,101977,4512,26103,6590,0,N,N,N,CP_Drtn,TT_Task,DT_FixedDUR2,TK_NotStart,JF721.259,"Weld Inner Horizontal Seam between Shell Course # 2 & 3""""",6942,352,0,40,0,360,360,40,220,0,220,,,,2013-01-19 07:00,2013-01-22 17:00,,2012-12-11 15:00,2012-12-16 10:00,2012-12-11 15:00,2012-12-16 10:00,2012-12-11 15:00,2012-12-16 10:00,2013-01-19 07:00,2013-01-22 17:00,,PT_Normal,,,,,RsyE2fvXkUyEBksbcGxcQw,AYzaOzcC+0SVspGFh3omtg,,,N,0,0,,,2013-11-05 11:09,2013-11-05 11:09,admin,admin,
261,101978,4512,26104,6590,0,N,N,N,CP_Drtn,TT_Task,DT_FixedDUR2,TK_NotStart,JF721.260,Prepare Shell Course # 4 for Erection,6942,352,0,32,0,130,130,32,30,0,30,,,,2013-01-23 07:00,2013-01-26 14:00,,2012-12-16 10:00,2012-12-19 12:00,2012-12-16 10:00,2012-12-19 12:00,2012-12-16 10:00,2012-12-19 12:00,2013-01-23 07:00,2013-01-26 14:00,,PT_Normal,,,,,hyJ6ZsKF4kuRMHrefGtkVA,Bh8dUtSXV0e+Ksnyty3PvQ,,,N,0,0,,,2013-11-05 11:09,2013-11-05 11:09,admin,admin,
262,101979,4512,26104,6590,0,N,N,N,CP_Drtn,TT_Task,DT_FixedDUR2,TK_NotStart,JF721.261,Erect & Tack Shell Course # 4,6965,352,0,40,0,260,260,40,120,0,120,,,,2013-01-26 14:00,2013-01-29 16:00,,2012-12-19 12:00,2012-12-23 17:00,2012-12-19 12:00,2012-12-23 17:00,2012-12-19 12:00,2012-12-23 17:00,2013-01-26 14:00,2013-01-29 16:00,,PT_Normal,,,,,x0notrap4EGbjQewITxo0g,FnpgCCzPpk6P25YAzjb7FA,,,N,0,0,,,2013-11-05 11:09,2013-11-05 11:09,admin,admin,
263,101980,4512,26104,6590,0,N,N,N,CP_Drtn,TT_Task,DT_FixedDUR2,TK_NotStart,JF721.262,Weld Outer Vertical Seam,6942,352,0,48,0,600,600,48,330,0,330,,,,2013-01-27 11:00,2013-01-31 12:00,,2012-12-20 10:00,2012-12-25 13:00,2012-12-20 10:00,2012-12-25 13:00,2012-12-20 10:00,2012-12-25 13:00,2013-01-27 11:00,2013-01-31 12:00,,PT_Normal,,,,,UDWWgnmlg02VV7leKSl1/w,5cVgI51C00+1j2h27EgbEw,,,N,0,0,,,2013-11-05 11:09,2013-11-05 11:09,admin,admin,
264,101981,4512,26104,6590,0,N,N,N,CP_Drtn,TT_Task,DT_FixedDUR2,TK_NotStart,JF721.263,Backgouge & NDT Inside Vertical Seam,6942,352,0,40,0,180,180,40,40,0,40,,,,2013-01-27 19:00,2013-01-31 12:00,,2012-12-21 10:30,2012-12-25 13:00,2012-12-21 10:30,2012-12-25 13:00,2012-12-21 10:30,2012-12-25 13:00,2013-01-27 19:00,2013-01-31 12:00,,PT_Normal,,,,,y2vru7DoFU6ytm+z5GyBMw,oNcenL9t7kmxM4cI6cnKHA,,,N,0,0,,,2013-11-05 11:09,2013-11-05 11:09,admin,admin,
265,101982,4512,26104,6590,0,N,N,N,CP_Drtn,TT_Task,DT_FixedDUR2,TK_NotStart,JF721.264,Weld Inside Vertical Seam,6935,352,0,40,0,280,280,40,160,0,160,,,,2013-01-28 10:00,2013-02-01 12:30,,2012-12-22 11:00,2012-12-26 11:00,2012-12-22 11:00,2012-12-26 11:00,2012-12-22 11:00,2012-12-26 11:00,2013-01-28 10:00,2013-02-01 12:30,,PT_Normal,,,,,E/yhhRtK4kWMJTimlhO/jQ,AOO+KXYiykWoBvXrHLTISg,,,N,0,0,,,2013-11-05 11:09,2013-11-05 11:09,admin,admin,
266,101983,4512,26104,6590,0,N,N,N,CP_Drtn,TT_Task,DT_FixedDUR2,TK_NotStart,JF721.265,"""""Fit & Tack Horizontal Seam between Shell Course # 3 & 4""""",6942,352,0,40,0,240,240,40,100,0,100,,,,2013-01-29 08:00,2013-02-02 13:00,,2012-12-23 09:00,2012-12-27 09:00,2012-12-23 09:00,2012-12-27 09:00,2012-12-23 09:00,2012-12-27 09:00,2013-01-29 08:00,2013-02-02 13:00,,PT_Normal,,,,,wmbv20HPXEeWtr8/tDRIdg,f+uNhvTdY0W8iTmTyN0P+Q,,,N,0,0,,,2013-11-05 11:09,2013-11-05 11:09,admin,admin,
267,101984,4512,26104,6590,0,N,N,N,CP_Drtn,TT_Task,DT_FixedDUR2,TK_NotStart,JF721.266,Weld Outer Horizontal Seam between Shell Course # 3 & 4,6942,352,0,56,0,520,520,56,280,0,280,,,,2013-01-29 16:00,2013-02-04 17:00,,2012-12-24 07:00,2012-12-30 08:00,2012-12-24 07:00,2012-12-30 08:00,2012-12-24 07:00,2012-12-30 08:00,2013-01-29 16:00,2013-02-04 17:00,,PT_Normal,,,,,wYB8j5kQGkCARcib0SNu0g,a4866ZCB9k6LY3zXWAxauA,,,N,0,0,,,2013-11-05 11:09,2013-11-05 11:09,admin,admin,
268,101985,4512,26104,6590,0,N,N,N,CP_Drtn,TT_Task,DT_FixedDUR2,TK_NotStart,JF721.267,"""""Backgouge & NDT Inside Horizontal Seam between Shell Course# 3 & 4""""",6942,352,0,40,0,160,160,40,40,0,40,,,,2013-01-30 14:00,2013-02-04 09:00,,2012-12-24 15:00,2012-12-29 10:00,2012-12-24 15:00,2012-12-29 10:00,2012-12-24 15:00,2012-12-29 10:00,2013-01-30 14:00,2013-02-04 09:00,,PT_Normal,,,,,R8mrY1v+JUOB/BrCs0wZ9Q,oDIcQgrhIE2BT2X6ZhNrdw,,,N,0,0,,,2013-11-05 11:09,2013-11-05 11:09,admin,admin,
269,101986,4512,26104,6590,0,N,N,N,CP_Drtn,TT_Task,DT_FixedDUR2,TK_NotStart,JF721.268,"Weld Inner Horizontal Seam between Shell Course # 3 & 4""""",6942,352,0,40,0,320,320,40,220,0,220,,,,2013-01-31 12:00,2013-02-04 17:00,,2012-12-25 13:00,2012-12-30 08:00,2012-12-25 13:00,2012-12-30 08:00,2012-12-25 13:00,2012-12-30 08:00,2013-01-31 12:00,2013-02-04 17:00,,PT_Normal,,,,,PtDB5yamEUC7j80TfjVR1w,IlZcypqrkkiT7vWvdYTU7Q,,,N,0,0,,,2013-11-05 11:09,2013-11-05 11:09,admin,admin,
270,101987,4512,26104,6590,0,N,N,N,CP_Drtn,TT_Task,DT_FixedDUR2,TK_NotStart,JF721.269,"Fit, Weld Shell Course # 1 Annular Plate & Oil Test",6964,552,200,72,0,1140,1140,72,360,0,360,,,,2013-01-23 07:00,2013-01-29 16:00,,2012-11-24 15:00,2012-12-02 12:00,2012-11-24 15:00,2012-12-02 12:00,2012-11-24 15:00,2012-12-02 12:00,2013-01-23 07:00,2013-01-29 16:00,,PT_Normal,,,,,iDGLjUYcoUqDxqz0W6UlwQ,Hd3Cw6x4qkutEzo1wLhJHQ,,,N,0,0,,,2013-11-05 11:09,2013-11-05 11:09,admin,admin,
271,101988,4512,26105,6590,0,N,N,N,CP_Drtn,TT_Task,DT_FixedDUR2,TK_NotStart,JF721.270,Erect & Tack Curve Angle,6942,352,0,40,0,240,240,40,100,0,100,,,,2013-02-05 07:00,2013-02-09 12:00,,2012-12-30 08:00,2013-01-03 08:00,2012-12-30 08:00,2013-01-03 08:00,2012-12-30 08:00,2013-01-03 08:00,2013-02-05 07:00,2013-02-09 12:00,,PT_Normal,,,,,uanh0W330UWs6iOX5TjOZw,4LEEoOCuY0O9LxelhKylNA,,,N,0,0,,,2013-11-05 11:09,2013-11-05 11:09,admin,admin,
272,101989,4512,26105,6590,0,N,N,N,CP_Drtn,TT_Task,DT_FixedDUR2,TK_NotStart,JF721.271,Weld Curve Angle,6942,352,0,56,0,720,720,56,440,0,440,,,,2013-02-09 12:00,2013-02-15 10:30,,2013-01-03 08:00,2013-01-09 09:00,2013-01-03 08:00,2013-01-09 09:00,2013-01-03 08:00,2013-01-09 09:00,2013-02-09 12:00,2013-02-15 10:30,,PT_Normal,,,,,qyN+4RWZVUmQgUVEx4dyVQ,mDvr2ryoH02BSTFTlZLUXg,,,N,0,0,,,2013-11-05 11:09,2013-11-05 11:09,admin,admin,
273,101990,4512,26106,6590,0,N,N,N,CP_Drtn,TT_Task,DT_FixedDUR2,TK_NotStart,JF721.272,MArk & Cut Holes,6964,352,0,48,0,270,270,48,90,0,90,,,,2013-02-09 12:00,2013-02-14 10:00,,2013-01-03 08:00,2013-01-08 11:00,2013-01-03 08:00,2013-01-08 11:00,2013-01-03 08:00,2013-01-08 11:00,2013-02-09 12:00,2013-02-14 10:00,,PT_Normal,,,,,M0rZbkjK+EOg6Q3/numu6w,KIGGf/WnD0ed22oKzp2sxw,,,N,0,0,,,2013-11-05 11:09,2013-11-05 11:09,admin,admin,
274,101991,4512,26106,6590,0,N,N,N,CP_Drtn,TT_Task,DT_FixedDUR2,TK_NotStart,JF721.273,"Fit & Tack Manholes ,Nozzles on Shell",6958,352,0,40,0,200,200,40,80,0,80,,,,2013-02-10 10:00,2013-02-14 10:00,,2013-01-03 16:00,2013-01-08 11:00,2013-01-03 16:00,2013-01-08 11:00,2013-01-03 16:00,2013-01-08 11:00,2013-02-10 10:00,2013-02-14 10:00,,PT_Normal,,,,,14DegSSP+0+n2xfLYMZsXA,rBcnUlW/60y/LAaEBzsSMw,,,N,0,0,,,2013-11-05 11:09,2013-11-05 11:09,admin,admin,
275,101992,4512,26106,6590,0,N,N,N,CP_Drtn,TT_Task,DT_FixedDUR2,TK_NotStart,JF721.274,Weld MAnholes & Nozzles on shell,6968,352,0,40,0,340,340,40,250,0,250,,,,2013-02-11 08:00,2013-02-15 10:30,,2013-01-05 09:00,2013-01-09 09:00,2013-01-05 09:00,2013-01-09 09:00,2013-01-05 09:00,2013-01-09 09:00,2013-02-11 08:00,2013-02-15 10:30,,PT_Normal,,,,,x867Y3ClBk2pNUGhRjC2bw,0KCSGwJNKU+tT+/YmtgeGA,,,N,0,0,,,2013-11-05 11:09,2013-11-05 11:09,admin,admin,
276,101993,4512,26106,6590,0,N,N,N,CP_Drtn,TT_Task,DT_FixedDUR2,TK_NotStart,JF721.275,NDT on Manholes & Nozzles on shell,6965,352,0,32,0,120,120,32,20,0,20,,,,2013-02-15 10:30,2013-02-18 15:00,,2013-01-09 09:00,2013-01-12 16:00,2013-01-09 09:00,2013-01-12 16:00,2013-01-09 09:00,2013-01-12 16:00,2013-02-15 10:30,2013-02-18 15:00,,PT_Normal,,,,,7LIYS0XDk0CRNEJu5jFTVw,8EilY1U3706EfnCqsOoftw,,,N,0,0,,,2013-11-05 11:09,2013-11-05 11:09,admin,admin,
277,101994,4512,26107,6590,0,N,N,N,CP_Drtn,TT_Task,DT_FixedDUR2,TK_NotStart,JF721.276,Prepare Tank for Roof Contruction,6914,352,0,48,0,390,390,48,90,0,90,,,,2013-02-15 10:30,2013-02-20 11:00,,2013-01-09 09:00,2013-01-14 12:00,2013-01-09 09:00,2013-01-14 12:00,2013-01-09 09:00,2013-01-14 12:00,2013-02-15 10:30,2013-02-20 11:00,,PT_Normal,,,,,VBtqytZGNEmsEVj+CvKyFA,lRS00tchZkqxfqnwTzxvGA,,,N,0,0,,,2013-11-05 11:09,2013-11-05 11:09,admin,admin,
278,101995,4512,26107,6590,0,N,N,N,CP_Drtn,TT_Task,DT_FixedDUR2,TK_NotStart,JF721.277,Install Shoe Support Structure on Shell,6964,352,0,64,0,800,800,64,300,0,300,,,,2013-02-20 11:00,2013-02-27 10:00,,2013-01-14 12:00,2013-01-21 11:00,2013-01-14 12:00,2013-01-21 11:00,2013-01-14 12:00,2013-01-21 11:00,2013-02-20 11:00,2013-02-27 10:00,,PT_Normal,,,,,pJ2tbKDRske/AJPla/2agQ,PbQ/co29dU+izHYm3twr6w,,,N,0,0,,,2013-11-05 11:09,2013-11-05 11:09,admin,admin,
279,101996,4512,26107,6590,0,N,N,N,CP_Drtn,TT_Task,DT_FixedDUR2,TK_NotStart,JF721.278,Install / Assemble Roof Rafters,6951,352,0,152,0,2720,2720,152,800,0,800,,,,2013-02-27 10:00,2013-03-15 14:30,,2013-01-21 11:00,2013-02-05 15:00,2013-01-21 11:00,2013-02-05 15:00,2013-01-21 11:00,2013-02-05 15:00,2013-02-27 10:00,2013-03-15 14:30,,PT_Normal,,,,,AwroIRcK80+N4v3A1P2y+Q,iIFBqAUwnkSEFCiOSVgkJQ,,,N,0,0,,,2013-11-05 11:09,2013-11-05 11:09,admin,admin,
280,101997,4512,26107,6590,0,N,N,N,CP_Drtn,TT_Task,DT_FixedDUR2,TK_NotStart,JF721.279,Installation of Roof Plates,6914,352,0,80,0,1050,1050,80,210,0,210,,,,2013-03-16 07:00,2013-03-24 12:00,,2013-02-05 15:00,2013-02-14 10:00,2013-02-05 15:00,2013-02-14 10:00,2013-02-05 15:00,2013-02-14 10:00,2013-03-16 07:00,2013-03-24 12:00,,PT_Normal,,,,,TGAGQHeLyk2GzxXxydCiBw,AzMvPn6voEGP9yR3lyt++Q,,,N,0,0,,,2013-11-05 11:09,2013-11-05 11:09,admin,admin,
281,101998,4512,26107,6590,0,N,N,N,CP_Drtn,TT_Task,DT_FixedDUR2,TK_NotStart,JF721.280,Install Roof Manholes & Nozzles,6942,352,0,40,0,340,340,40,100,0,100,,,,2013-03-24 12:00,2013-03-28 12:00,,2013-02-14 10:00,2013-02-18 15:00,2013-02-14 10:00,2013-02-18 15:00,2013-02-14 10:00,2013-02-18 15:00,2013-03-24 12:00,2013-03-28 12:00,,PT_Normal,,,,,eKA7jxJei0CFKJRyv2PHsg,XyLBxpvVO02nLeXXA/6jWA,,,N,0,0,,,2013-11-05 11:09,2013-11-05 11:09,admin,admin,
282,101999,4512,26149,6590,0,N,N,N,CP_Drtn,TT_Task,DT_FixedDUR2,TK_NotStart,JF721.281,"Erect & Fix Stairs, Handrails & Platforms on Shell",6942,352,0,56,0,720,720,56,240,0,240,,,,2013-03-28 12:00,2013-04-03 13:00,,2013-02-18 15:00,2013-02-24 16:00,2013-02-18 15:00,2013-02-24 16:00,2013-02-18 15:00,2013-02-24 16:00,2013-03-28 12:00,2013-04-03 13:00,,PT_Normal,,,,,rnTlJu0JyEuBwFJCYto9jA,5EyPUwMeTEmEfhHgV6rOaQ,,,N,0,0,,,2013-11-05 11:09,2013-11-05 11:09,admin,admin,
283,102000,4512,26149,6590,0,N,N,N,CP_Drtn,TT_Task,DT_FixedDUR2,TK_NotStart,JF721.282,Erect & Fix Roof Platforms & Handrails,6942,352,0,64,0,800,800,64,300,0,300,,,,2013-03-28 12:00,2013-04-04 11:00,,2013-02-18 15:00,2013-02-25 14:00,2013-02-18 15:00,2013-02-25 14:00,2013-02-18 15:00,2013-02-25 14:00,2013-03-28 12:00,2013-04-04 11:00,,PT_Normal,,,,,+s/UcTiH0Ui0pXnTfiLPQA,Lb5PVGvsWk2o3r/VbRiomA,,,N,0,0,,,2013-11-05 11:09,2013-11-05 11:09,admin,admin,
284,102001,4512,26150,6590,0,N,N,N,CP_Drtn,TT_Task,DT_FixedDUR2,TK_NotStart,JF721.283,Install Blind Flanges,6965,352,0,16,0,80,80,16,20,0,20,,,,2013-04-04 11:00,2013-04-06 12:00,,2013-02-25 14:00,2013-02-27 10:00,2013-02-25 14:00,2013-02-27 10:00,2013-02-25 14:00,2013-02-27 10:00,2013-04-04 11:00,2013-04-06 12:00,,PT_Normal,,,,,lEzt/5SKmUa1SZfYSe8foQ,bansJdM3X0yoUVEYaMB/xw,,,N,0,0,,,2013-11-05 11:09,2013-11-05 11:09,admin,admin,
285,102002,4512,26150,6590,0,N,N,N,CP_Drtn,TT_Task,DT_FixedDUR2,TK_NotStart,JF721.284,Tank Water Filling,6965,352,0,192,0,1460,1460,192,690,0,690,,,,2013-04-06 12:00,2013-04-27 09:00,,2013-02-27 10:00,2013-03-19 17:00,2013-02-27 10:00,2013-03-19 17:00,2013-02-27 10:00,2013-03-19 17:00,2013-04-06 12:00,2013-04-27 09:00,,PT_Normal,,,,,+I6iE1LHWUuTuDR/MH3GvA,Kh4mzvRJ7U6puAbF5H7xpQ,,,N,0,0,,,2013-11-05 11:09,2013-11-05 11:09,admin,admin,
286,102003,4512,26150,6590,0,N,N,N,CP_Drtn,TT_Task,DT_FixedDUR2,TK_NotStart,JF721.285,Hold Water for 48 Hours,6965,352,0,24,0,240,240,24,40,0,40,,,,2013-04-27 09:00,2013-04-29 13:00,,2013-03-20 07:00,2013-03-22 13:30,2013-03-20 07:00,2013-03-22 13:30,2013-03-20 07:00,2013-03-22 13:30,2013-04-27 09:00,2013-04-29 13:00,,PT_Normal,,,,,mP/kXya8CEeFGNp5sY789A,Hztw/9W0LUmVyvntp0hYYQ,,,N,0,0,,,2013-11-05 11:09,2013-11-05 11:09,admin,admin,
287,102004,4512,26150,6590,0,N,N,N,CP_Drtn,TT_Task,DT_FixedDUR2,TK_NotStart,JF721.286,Drain Water from Tank,6965,360,0,104,0,1560,1560,104,240,0,240,,,,2013-04-30 11:00,2013-05-11 15:00,,2013-03-22 13:30,2013-04-02 15:00,2013-03-22 13:30,2013-04-02 15:00,2013-03-22 13:30,2013-04-02 15:00,2013-04-30 11:00,2013-05-11 15:00,,PT_Normal,,,,,N/KVWGEKn0OLGVGi1LG/Xg,TICNOBkmHEGq2yaXZRVaLA,,,N,0,0,,,2013-11-05 11:09,2013-11-05 11:09,admin,admin,
288,102005,4512,26150,6590,0,N,N,N,CP_Drtn,TT_Task,DT_FixedDUR2,TK_NotStart,JF721.287,Clean & Dry Out Tank,6942,360,0,24,0,360,360,24,40,0,40,,,,2013-05-11 15:00,2013-05-14 09:00,,2013-04-02 15:00,2013-04-05 11:30,2013-04-02 15:00,2013-04-05 11:30,2013-04-02 15:00,2013-04-05 11:30,2013-05-11 15:00,2013-05-14 09:00,,PT_Normal,,,,,dNf5gRJL2UOT2UaCS1LjAg,U7W2RDXctU2pKuHyUnEDrg,,,N,0,0,,,2013-11-05 11:09,2013-11-05 11:09,admin,admin,
289,102006,4512,26110,6590,0,N,N,N,CP_Drtn,TT_Task,DT_FixedDUR2,TK_NotStart,JF721.288,Erect  Scafolding Outside Tank,6942,352,0,72,0,1120,1120,72,160,0,160,,,,2013-04-29 13:00,2013-05-07 10:00,,2013-03-22 13:30,2013-03-30 13:00,2013-03-22 13:30,2013-03-30 13:00,2013-03-22 13:30,2013-03-30 13:00,2013-04-29 13:00,2013-05-07 10:00,,PT_Normal,,,,,eBojnVHSCUq/2q7Yf8gA4w,NX0HJySfA0ee8dax3nEcVw,,,N,0,0,,,2013-11-05 11:09,2013-11-05 11:09,admin,admin,
290,102007,4512,26110,6590,0,N,N,N,CP_Drtn,TT_Task,DT_FixedDUR2,TK_NotStart,JF721.289,External Shell Blast & Prime,6950,352,0,40,0,600,600,40,80,0,80,,,,2013-05-07 10:00,2013-05-11 15:00,,2013-03-30 13:00,2013-04-03 13:00,2013-03-30 13:00,2013-04-03 13:00,2013-03-30 13:00,2013-04-03 13:00,2013-05-07 10:00,2013-05-11 15:00,,PT_Normal,,,,,sdtHTJADHkichehYSs5/tg,pmfMQhFbCk2DnuEWFOOGgw,,,N,0,0,,,2013-11-05 11:09,2013-11-05 11:09,admin,admin,
291,102008,4512,26110,6590,0,N,N,N,CP_Drtn,TT_Task,DT_FixedDUR2,TK_NotStart,JF721.290,External Shell Secondary & Final Coat,6965,352,0,40,0,600,600,40,80,0,80,,,,2013-05-08 08:00,2013-05-12 13:00,,2013-03-31 11:00,2013-04-04 11:00,2013-03-31 11:00,2013-04-04 11:00,2013-03-31 11:00,2013-04-04 11:00,2013-05-08 08:00,2013-05-12 13:00,,PT_Normal,,,,,tWX9opLHv0KbSzjor8nh9Q,LrXrl8VuZUKaDkTnCorn2w,,,N,0,0,,,2013-11-05 11:09,2013-11-05 11:09,admin,admin,
292,102009,4512,26110,6590,0,N,N,N,CP_Drtn,TT_Task,DT_FixedDUR2,TK_NotStart,JF721.291,External Shell Paint Inspection,6935,352,0,16,0,80,80,16,20,0,20,,,,2013-05-12 13:00,2013-05-14 09:00,,2013-04-04 11:00,2013-04-06 12:00,2013-04-04 11:00,2013-04-06 12:00,2013-04-04 11:00,2013-04-06 12:00,2013-05-12 13:00,2013-05-14 09:00,,PT_Normal,,,,,skoplMztwkG5VAZdWn0HIA,zNCSE9hsPU+w0PbWL4y0RQ,,,N,0,0,,,2013-11-05 11:09,2013-11-05 11:09,admin,admin,
293,102010,4512,26110,6590,0,N,N,N,CP_Drtn,TT_Task,DT_FixedDUR2,TK_NotStart,JF721.292,Dismantle External Scaffolding,6957,352,0,24,0,300,300,24,40,0,40,,,,2013-05-14 09:00,2013-05-16 13:00,,2013-04-06 12:00,2013-04-08 16:00,2013-04-06 12:00,2013-04-08 16:00,2013-04-06 12:00,2013-04-08 16:00,2013-05-14 09:00,2013-05-16 13:00,,PT_Normal,,,,,Qi9v7oW/10GQh7oXtUEguw,h8ZTaHGim0WHe47851X01g,,,N,0,0,,,2013-11-05 11:09,2013-11-05 11:09,admin,admin,
294,102011,4512,26111,6590,0,N,N,N,CP_Drtn,TT_Task,DT_FixedDUR2,TK_NotStart,JF721.293,Erect Scafolding Inside Tank,6942,360,8,56,0,900,900,56,120,0,120,,,,2013-05-14 09:00,2013-05-20 10:00,,2013-04-05 11:30,2013-04-11 10:00,2013-04-05 11:30,2013-04-11 10:00,2013-04-05 11:30,2013-04-11 10:00,2013-05-14 09:00,2013-05-20 10:00,,PT_Normal,,,,,SRBy6P0+s0CYv4hPPXAnRQ,vidy906DS0uiEq9Jcg/PUg,,,N,0,0,,,2013-11-05 11:09,2013-11-05 11:09,admin,admin,
295,102012,4512,26111,6590,0,N,N,N,CP_Drtn,TT_Task,DT_FixedDUR2,TK_NotStart,JF721.294,Internal Shell Blast & Prime,6949,352,0,32,0,480,480,32,60,0,60,,,,2013-05-16 13:00,2013-05-20 10:00,,2013-04-08 16:00,2013-04-12 10:30,2013-04-08 16:00,2013-04-12 10:30,2013-04-08 16:00,2013-04-12 10:30,2013-05-16 13:00,2013-05-20 10:00,,PT_Normal,,,,,VqJ5B5iou0q+9t3erunptQ,EcDxdvHaBEGzZrj34KuDLw,,,N,0,0,,,2013-11-05 11:09,2013-11-05 11:09,admin,admin,
296,102013,4512,26111,6590,0,N,N,N,CP_Drtn,TT_Task,DT_FixedDUR2,TK_NotStart,JF721.295,Internal Shell Secondary & Final Coat,6950,352,0,32,0,390,390,32,60,0,60,,,,2013-05-20 10:00,2013-05-23 12:00,,2013-04-12 10:30,2013-04-15 15:00,2013-04-12 10:30,2013-04-15 15:00,2013-04-12 10:30,2013-04-15 15:00,2013-05-20 10:00,2013-05-23 12:00,,PT_Normal,,,,,8fMI8I90HkOybTKJ4z8p5Q,wZGqCHL8t0WnxIy/M/19Uw,,,N,0,0,,,2013-11-05 11:09,2013-11-05 11:09,admin,admin,
297,102014,4512,26111,6590,0,N,N,N,CP_Drtn,TT_Task,DT_FixedDUR2,TK_NotStart,JF721.296,Internal Shell Paint Inspection,6965,352,0,16,0,70,70,16,20,0,20,,,,2013-05-20 10:00,2013-05-21 16:00,,2013-04-12 10:30,2013-04-14 09:00,2013-04-12 10:30,2013-04-14 09:00,2013-04-12 10:30,2013-04-14 09:00,2013-05-20 10:00,2013-05-21 16:00,,PT_Normal,,,,,imDar3phrU+mhhZhSuymQw,y9fO7Scg7E+e7C945Imudw,,,N,0,0,,,2013-11-05 11:09,2013-11-05 11:09,admin,admin,
298,102015,4512,26111,6590,0,N,N,N,CP_Drtn,TT_Task,DT_FixedDUR2,TK_NotStart,JF721.297,Dismantle Internal Scaffolding,6942,352,0,40,0,480,480,40,80,0,80,,,,2013-05-21 16:00,2013-05-26 11:00,,2013-04-14 09:00,2013-04-18 09:00,2013-04-14 09:00,2013-04-18 09:00,2013-04-14 09:00,2013-04-18 09:00,2013-05-21 16:00,2013-05-26 11:00,,PT_Normal,,,,,qzPi4D0oi0+Bbwz2k1ILCw,yu9LhqdEMkmwT1t857x5Tw,,,N,0,0,,,2013-11-05 11:09,2013-11-05 11:09,admin,admin,
299,102016,4512,26111,6590,0,N,N,N,CP_Drtn,TT_Task,DT_FixedDUR2,TK_NotStart,JF721.298,Bottom/Annular Plate Blast & Prime,6949,352,0,24,0,320,320,24,80,0,80,,,,2013-05-26 11:00,2013-05-28 15:00,,2013-04-18 09:00,2013-04-21 08:00,2013-04-18 09:00,2013-04-21 08:00,2013-04-18 09:00,2013-04-21 08:00,2013-05-26 11:00,2013-05-28 15:00,,PT_Normal,,,,,C2XvIlFb/U2WGdfMl/K3Fg,DbN3WnOHDECoEhhms9W2Yg,,,N,0,0,,,2013-11-05 11:09,2013-11-05 11:09,admin,admin,
300,102017,4512,26111,6590,0,N,N,N,CP_Drtn,TT_Task,DT_FixedDUR2,TK_NotStart,JF721.299,Bottom/Annular Plate Secondary & Final Coat,6950,352,0,24,0,260,260,24,80,0,80,,,,2013-05-28 15:00,2013-05-31 11:30,,2013-04-21 08:00,2013-04-23 12:00,2013-04-21 08:00,2013-04-23 12:00,2013-04-21 08:00,2013-04-23 12:00,2013-05-28 15:00,2013-05-31 11:30,,PT_Normal,,,,,e3ZVsNs3z0OGOVysueRSOA,5jQfhNzf/Uq3OARytNb6qw,,,N,0,0,,,2013-11-05 11:09,2013-11-05 11:09,admin,admin,
301,102018,4512,26111,6590,0,N,N,N,CP_Drtn,TT_Task,DT_FixedDUR2,TK_NotStart,JF721.300,Bottom/Annular Plate Paint Inspection,6942,352,0,16,0,120,120,16,40,0,40,,,,2013-05-31 11:30,2013-06-02 10:00,,2013-04-23 12:00,2013-04-25 08:00,2013-04-23 12:00,2013-04-25 08:00,2013-04-23 12:00,2013-04-25 08:00,2013-05-31 11:30,2013-06-02 10:00,,PT_Normal,,,,,4i1urzMPYkeoK48oPtCtnQ,t2L8aWgy5kSdkuqtYptyaw,,,N,0,0,,,2013-11-05 11:09,2013-11-05 11:09,admin,admin,
302,102019,4512,26112,6590,0,N,N,N,CP_Drtn,TT_Task,DT_FixedDUR2,TK_NotStart,JF721.301,Tanks lighting,6942,352,0,24,0,200,200,24,40,0,40,,,,2013-07-16 16:00,2013-07-19 12:30,,2013-06-09 09:00,2013-06-11 13:00,2013-06-09 09:00,2013-06-11 13:00,2013-06-09 09:00,2013-06-11 13:00,2013-07-16 16:00,2013-07-19 12:30,,PT_Normal,,,,,cyOqHnbCDky1wSa2Wb4MGg,7y5Qe1s210qmT+OEF38g9A,,,N,0,0,,,2013-11-05 11:09,2013-11-05 11:09,admin,admin,
303,102020,4512,26112,6590,0,N,N,N,CP_Drtn,TT_Task,DT_FixedDUR2,TK_NotStart,JF721.302,Tanks lighting  protection,6942,352,0,24,0,200,200,24,40,0,40,,,,2013-07-19 12:30,2013-07-22 09:00,,2013-06-11 13:00,2013-06-13 17:00,2013-06-11 13:00,2013-06-13 17:00,2013-06-11 13:00,2013-06-13 17:00,2013-07-19 12:30,2013-07-22 09:00,,PT_Normal,,,,,LBCrqI+hKkWJbVIMSDXFtQ,DDo+Xv7R+k66PRF1lFqpDQ,,,N,0,0,,,2013-11-05 11:09,2013-11-05 11:09,admin,admin,
304,102021,4512,26112,6590,0,N,N,N,CP_Drtn,TT_Task,DT_FixedDUR2,TK_NotStart,JF721.303,Grounding system,6942,352,0,24,0,160,160,24,40,0,40,,,,2013-07-22 09:00,2013-07-24 13:00,,2013-06-14 09:30,2013-06-16 16:00,2013-06-14 09:30,2013-06-16 16:00,2013-06-14 09:30,2013-06-16 16:00,2013-07-22 09:00,2013-07-24 13:00,,PT_Normal,,,,,X9A1Nqm/4Eeq4T1cXzgmag,AdBUkj8+oEi0Eo2JeQDOPQ,,,N,0,0,,,2013-11-05 11:09,2013-11-05 11:09,admin,admin,
305,102022,4512,26113,6590,0,N,N,N,CP_Drtn,TT_Task,DT_FixedDUR2,TK_NotStart,JF721.304,Concrete testing,6916,352,0,32,0,210,210,32,60,0,60,,,,2013-07-24 13:00,2013-07-28 10:00,,2013-06-16 16:00,2013-06-20 08:00,2013-06-16 16:00,2013-06-20 08:00,2013-06-16 16:00,2013-06-20 08:00,2013-07-24 13:00,2013-07-28 10:00,,PT_Normal,,,,,YGdT3LoV/U2strkwj0zAIw,6ft2cTrvvkS3JbzQ3DAeBg,,,N,0,0,,,2013-11-05 11:09,2013-11-05 11:09,admin,admin,
306,102023,4512,26113,6590,0,N,N,N,CP_Drtn,TT_Task,DT_FixedDUR2,TK_NotStart,JF721.305,RT testing for the welding,6942,352,0,40,0,240,240,40,80,0,80,,,,2013-07-28 10:00,2013-08-01 10:00,,2013-06-20 08:00,2013-06-24 13:00,2013-06-20 08:00,2013-06-24 13:00,2013-06-20 08:00,2013-06-24 13:00,2013-07-28 10:00,2013-08-01 10:00,,PT_Normal,,,,,tC5aIbvnIUuTX2KsWuRnbA,Bc+toI8VmUGsp2SonmfYsg,,,N,0,0,,,2013-11-05 11:09,2013-11-05 11:09,admin,admin,
307,102024,4512,26113,6590,0,N,N,N,CP_Drtn,TT_Task,DT_FixedDUR2,TK_NotStart,JF721.306,Sand testing,6915,352,0,40,0,240,240,40,80,0,80,,,,2013-08-01 10:00,2013-08-05 15:00,,2013-06-24 13:00,2013-06-29 08:00,2013-06-24 13:00,2013-06-29 08:00,2013-06-24 13:00,2013-06-29 08:00,2013-08-01 10:00,2013-08-05 15:00,,PT_Normal,,,,,L6DtdQQTKEeTqc3cGvGf0g,cFr8gK331kqMvYV03T5dHA,,,N,0,0,,,2013-11-05 11:09,2013-11-05 11:09,admin,admin,
308,102025,4512,26113,6590,0,N,N,N,CP_Drtn,TT_Task,DT_FixedDUR2,TK_NotStart,JF721.307,Tank Calibration,6965,352,0,40,0,140,140,40,40,0,40,,,,2013-08-05 15:00,2013-08-10 10:00,,2013-06-29 08:00,2013-07-03 08:00,2013-06-29 08:00,2013-07-03 08:00,2013-06-29 08:00,2013-07-03 08:00,2013-08-05 15:00,2013-08-10 10:00,,PT_Normal,,,,,djlkEQ9QEUOb4MyH5Vscrw,x7QmKf7CPEeCne+hTwDCMA,,,N,0,0,,,2013-11-05 11:09,2013-11-05 11:09,admin,admin,
309,102026,4512,26114,6590,0,N,N,N,CP_Drtn,TT_Task,DT_FixedDUR2,TK_NotStart,JF721.221,Rental For Workers & Engineers Accomodation with Facilities,6915,384,0,40,0,320,320,40,120,0,120,,,,2012-08-14 11:00,2012-08-18 16:00,,2012-07-04 07:00,2012-07-08 12:00,2012-07-04 07:00,2012-07-08 12:00,2012-07-04 07:00,2012-07-08 12:00,2012-08-14 11:00,2012-08-18 16:00,,PT_Normal,,,,,EYh8hker8UCGNb1k9sgrJg,HrSgeaSbv0CSiWrOgcgh6Q,,,N,0,0,,,2013-11-05 11:09,2013-11-05 11:09,admin,admin,
310,102027,4512,26114,6590,0,N,N,N,CP_Drtn,TT_Task,DT_FixedDUR2,TK_NotStart,JF721.223,Ma'aden Inspection & Approval for Portacabins,6915,384,0,16,0,80,80,16,30,0,30,,,,2012-09-08 11:00,2012-09-09 17:00,,2012-07-25 12:00,2012-07-27 10:30,2012-07-25 12:00,2012-07-27 10:30,2012-07-25 12:00,2012-07-27 10:30,2012-09-08 11:00,2012-09-09 17:00,,PT_Normal,,,,,+svAbJ/4Q02Ve37ncU1gfA,gfOjc+CVD02J1vIWbNmX4Q,,,N,0,0,,,2013-11-05 11:09,2013-11-05 11:09,admin,admin,
311,102028,4512,26114,6590,0,N,N,N,CP_Drtn,TT_Task,DT_FixedDUR2,TK_NotStart,JF721.222,Complete Mobilize AZ Equipment to Site & Prepare the site fabrication yard,6951,384,0,200,0,2160,2160,200,720,0,720,,,,2012-08-14 11:00,2012-09-08 11:00,,2012-07-04 07:00,2012-07-25 12:00,2012-07-04 07:00,2012-07-25 12:00,2012-07-04 07:00,2012-07-25 12:00,2012-08-14 11:00,2012-09-08 11:00,,PT_Normal,,,,,edOOYdUXRkSTMRksumaI4g,MMvSbrC2QkyGClDJyH1uJQ,,,N,0,0,,,2013-11-05 11:09,2013-11-05 11:09,admin,admin,
312,102029,4512,26197,6590,0,N,N,N,CP_Drtn,TT_Task,DT_FixedDUR2,TK_NotStart,JF721.237,Prepare Shell Course # 1 for Erection,6951,352,0,32,0,100,100,32,30,0,30,,,,2012-12-22 11:00,2012-12-25 13:00,,2012-11-14 09:00,2012-11-17 16:00,2012-11-14 09:00,2012-11-17 16:00,2012-11-14 09:00,2012-11-17 16:00,2012-12-22 11:00,2012-12-25 13:00,,PT_Normal,,,,,reKZu/3DQECgs/It1lDD7g,XgtPMJGhUk+gdCHLmZFEXA,,,N,0,0,,,2013-11-05 11:09,2013-11-05 11:09,admin,admin,
313,102030,4512,26197,6590,0,N,N,N,CP_Drtn,TT_Task,DT_FixedDUR2,TK_NotStart,JF721.238,Erect & Tack Shell Course # 1,6951,352,0,40,0,320,320,40,200,0,200,,,,2012-12-25 13:00,2012-12-30 08:00,,2012-11-17 16:00,2012-11-21 16:00,2012-11-17 16:00,2012-11-21 16:00,2012-11-17 16:00,2012-11-21 16:00,2012-12-25 13:00,2012-12-30 08:00,,PT_Normal,,,,,10xrcYt4dEuID83Lq9gCUQ,lYIICyevK0KWhlRfcxgE9Q,,,N,0,0,,,2013-11-05 11:09,2013-11-05 11:09,admin,admin,
314,102031,4512,26197,6590,0,N,N,N,CP_Drtn,TT_Task,DT_FixedDUR2,TK_NotStart,JF721.239,Weld Outer Vertical Seam,6942,352,0,40,0,280,280,40,140,0,140,,,,2012-12-26 11:00,2012-12-30 16:00,,2012-11-18 14:00,2012-11-22 14:00,2012-11-18 14:00,2012-11-22 14:00,2012-11-18 14:00,2012-11-22 14:00,2012-12-26 11:00,2012-12-30 16:00,,PT_Normal,,,,,D3k0y8yp7UGV3fJd829aLA,QZ+VUGcZFEqSWYekOyWirA,,,N,0,0,,,2013-11-05 11:09,2013-11-05 11:09,admin,admin,
315,102032,4512,26197,6590,0,N,N,N,CP_Drtn,TT_Task,DT_FixedDUR2,TK_NotStart,JF721.240,Backgouge & NDT Inside Vertical Seam,6965,352,0,40,0,220,220,40,80,0,80,,,,2012-12-27 09:00,2012-12-31 14:00,,2012-11-19 12:00,2012-11-23 14:30,2012-11-19 12:00,2012-11-23 14:30,2012-11-19 12:00,2012-11-23 14:30,2012-12-27 09:00,2012-12-31 14:00,,PT_Normal,,,,,CUx/ifzXxUCj3XSUQhsMHQ,Oquglvz0g0+sTQlwVp+Mfg,,,N,0,0,,,2013-11-05 11:09,2013-11-05 11:09,admin,admin,
316,102033,4512,26197,6590,0,N,N,N,CP_Drtn,TT_Task,DT_FixedDUR2,TK_NotStart,JF721.241,Weld Inside Vertical Seam,6968,352,0,40,0,400,400,40,140,0,140,,,,2012-12-28 09:30,2013-01-01 12:00,,2012-11-20 10:00,2012-11-24 15:00,2012-11-20 10:00,2012-11-24 15:00,2012-11-20 10:00,2012-11-24 15:00,2012-12-28 09:30,2013-01-01 12:00,,PT_Normal,,,,,VGpxyNNI10u2LCJXRrad8w,bNgvLtxoF0WK2nioT03ing,,,N,0,0,,,2013-11-05 11:09,2013-11-05 11:09,admin,admin,
317,102034,4512,26157,6590,0,N,N,N,CP_Drtn,TT_Task,DT_FixedDUR2,TK_NotStart,JF721.224,Layout/Stake-out,6942,384,0,24,0,260,260,24,60,0,60,,,,2012-09-10 07:00,2012-09-12 11:00,,2012-07-27 10:30,2012-07-29 17:00,2012-07-27 10:30,2012-07-29 17:00,2012-07-27 10:30,2012-07-29 17:00,2012-09-10 07:00,2012-09-12 11:00,,PT_Normal,,,,,17jxgXsE306BVjy0dD3tjA,zEeV7AYxDU6oxVE21A97rA,,,N,0,0,,,2013-11-05 11:09,2013-11-05 11:09,admin,admin,
318,102035,4512,26157,6590,0,N,N,N,CP_Drtn,TT_Task,DT_FixedDUR2,TK_NotStart,JF721.225,Excavation,6942,384,0,128,0,2250,2250,128,600,0,600,,,,2012-09-12 11:00,2012-09-26 09:00,,2012-07-30 07:00,2012-08-12 15:00,2012-07-30 07:00,2012-08-12 15:00,2012-07-30 07:00,2012-08-12 15:00,2012-09-12 11:00,2012-09-26 09:00,,PT_Normal,,,,,NVn6TWTdD0i3CjAAu1WSyQ,A40lJUmBtky36sGaQyLSlg,,,N,0,0,,,2013-11-05 11:09,2013-11-05 11:09,admin,admin,
319,102036,4512,26157,6590,0,N,N,N,CP_Drtn,TT_Task,DT_FixedDUR2,TK_NotStart,JF721.226,SteelWorks/Formworks,6980,384,0,104,0,1920,1920,104,360,0,360,,,,2012-09-26 09:00,2012-10-07 13:00,,2012-08-12 15:00,2012-08-27 09:00,2012-08-12 15:00,2012-08-27 09:00,2012-08-12 15:00,2012-08-27 09:00,2012-09-26 09:00,2012-10-07 13:00,,PT_Normal,,,,,irwIaE27906NO2PUz5ohyQ,OqdqJmCL+EKcmdEpK9P4sA,,,N,0,0,,,2013-11-05 11:09,2013-11-05 11:09,admin,admin,
320,102037,4512,26157,6590,0,N,N,N,CP_Drtn,TT_Task,DT_FixedDUR2,TK_NotStart,JF721.227,Soil Compaction,6965,384,0,48,0,750,750,48,200,0,200,,,,2012-10-07 13:00,2012-10-12 13:30,,2012-08-27 09:00,2012-09-01 12:00,2012-08-27 09:00,2012-09-01 12:00,2012-08-27 09:00,2012-09-01 12:00,2012-10-07 13:00,2012-10-12 13:30,,PT_Normal,,,,,WKJcZbsEhEyUUwM2wpi6jA,Fw1ZJ+kPUUypXcJsWVdREg,,,N,0,0,,,2013-11-05 11:09,2013-11-05 11:09,admin,admin,
321,102038,4512,26117,6590,0,N,N,N,CP_Drtn,TT_Task,DT_FixedDUR2,TK_NotStart,JF721.228,Concrete Pouring,6951,384,0,16,0,140,140,16,28,0,28,,,,2012-10-12 13:30,2012-10-14 12:00,,2012-09-01 12:00,2012-09-03 08:00,2012-09-01 12:00,2012-09-03 08:00,2012-09-01 12:00,2012-09-03 08:00,2012-10-12 13:30,2012-10-14 12:00,,PT_Normal,,,,,vXbqdBDvlE+CWnhBGst1OA,IS4vCyzVkEaBdYQLzRNHwA,,,N,0,0,,,2013-11-05 11:09,2013-11-05 11:09,admin,admin,
322,102039,4512,26117,6590,0,N,N,N,CP_Drtn,TT_Task,DT_FixedDUR2,TK_NotStart,JF721.229,Concrete Curing,6965,384,0,24,0,240,240,24,60,0,60,,,,2012-10-13 14:00,2012-10-16 08:00,,2012-09-02 10:00,2012-09-04 14:00,2012-09-02 10:00,2012-09-04 14:00,2012-09-02 10:00,2012-09-04 14:00,2012-10-13 14:00,2012-10-16 08:00,,PT_Normal,,,,,7BjBCVv6AkykQ3ZXQXkoLA,1YEsaRCpGkWH2OpUJiN/cQ,,,N,0,0,,,2013-11-05 11:09,2013-11-05 11:09,admin,admin,
323,102040,4512,26117,6590,0,N,N,N,CP_Drtn,TT_Task,DT_FixedDUR2,TK_NotStart,JF721.230,Removal of Formworks,6951,384,0,48,0,650,650,48,150,0,150,,,,2012-10-16 08:00,2012-10-21 11:00,,2012-09-04 14:00,2012-09-09 17:00,2012-09-04 14:00,2012-09-09 17:00,2012-09-04 14:00,2012-09-09 17:00,2012-10-16 08:00,2012-10-21 11:00,,PT_Normal,,,,,YjBwBMhyHUuB5UwnouZgCw,M6QYgC4jbUu+Pmc6mpXdDQ,,,N,0,0,,,2013-11-05 11:09,2013-11-05 11:09,admin,admin,
324,102041,4512,26117,6590,0,N,N,N,CP_Drtn,TT_Task,DT_FixedDUR2,TK_NotStart,JF721.231,Backfilling,6965,384,0,56,0,720,720,56,240,0,240,,,,2012-10-21 11:00,2012-10-28 17:00,,2012-09-10 07:00,2012-09-16 08:00,2012-09-10 07:00,2012-09-16 08:00,2012-09-10 07:00,2012-09-16 08:00,2012-10-21 11:00,2012-10-28 17:00,,PT_Normal,,,,,jHTGGI78YkijwUZNUlfrsg,3eyz/V5xikmiPeysCYtyww,,,N,0,0,,,2013-11-05 11:09,2013-11-05 11:09,admin,admin,
325,102042,4512,26118,6590,0,N,N,N,CP_Drtn,TT_Task,DT_FixedDUR2,TK_NotStart,JF721.232,Erect & Weld Annular Plates,6942,352,0,120,0,770,770,120,350,0,350,,,,2012-10-29 07:00,2012-11-10 17:00,,2012-09-19 10:00,2012-10-02 10:00,2012-09-19 10:00,2012-10-02 10:00,2012-09-19 10:00,2012-10-02 10:00,2012-10-29 07:00,2012-11-10 17:00,,PT_Normal,,,,,TV8M7FEqVkOPoODGcVu8Fg,wAcsRKLcHkq/L3INr7lwpw,,,N,0,0,,,2013-11-05 11:09,2013-11-05 11:09,admin,admin,
326,102043,4512,26118,6590,0,N,N,N,CP_Drtn,TT_Task,DT_FixedDUR2,TK_NotStart,JF721.233,Erect & Tack Bottom Plates,6951,352,0,160,0,960,960,160,300,0,300,,,,2012-11-11 07:00,2012-11-27 17:00,,2012-10-02 10:00,2012-10-19 12:30,2012-10-02 10:00,2012-10-19 12:30,2012-10-02 10:00,2012-10-19 12:30,2012-11-11 07:00,2012-11-27 17:00,,PT_Normal,,,,,VQrejyfuBk6wzulQpi8MgA,110SImtgt0aH/kqL4icYqg,,,N,0,0,,,2013-11-05 11:09,2013-11-05 11:09,admin,admin,
327,102044,4512,26118,6590,0,N,N,N,CP_Drtn,TT_Task,DT_FixedDUR2,TK_NotStart,JF721.234,Welding of Bottom Plates,6968,352,0,200,0,1190,1190,200,420,0,420,,,,2012-11-28 07:00,2012-12-19 12:00,,2012-10-19 12:30,2012-11-11 15:00,2012-10-19 12:30,2012-11-11 15:00,2012-10-19 12:30,2012-11-11 15:00,2012-11-28 07:00,2012-12-19 12:00,,PT_Normal,,,,,oDF37+WqGkKmrt2ygPptUQ,zWD8t9dWWk6r42mM7S9ODg,,,N,0,0,,,2013-11-05 11:09,2013-11-05 11:09,admin,admin,
328,102045,4512,26118,6590,0,N,N,N,CP_Drtn,TT_Task,DT_FixedDUR2,TK_NotStart,JF721.235,Visual Inspection & Cleaning,6935,352,0,16,0,160,160,16,100,0,100,,,,2012-12-19 12:00,2012-12-21 10:30,,2012-11-11 15:00,2012-11-13 11:00,2012-11-11 15:00,2012-11-13 11:00,2012-11-11 15:00,2012-11-13 11:00,2012-12-19 12:00,2012-12-21 10:30,,PT_Normal,,,,,6oUqLx/lxEixickh7nTT8w,stTKlzl250O8vdnn2608yQ,,,N,0,0,,,2013-11-05 11:09,2013-11-05 11:09,admin,admin,
329,102046,4512,26118,6590,0,N,N,N,CP_Drtn,TT_Task,DT_FixedDUR2,TK_NotStart,JF721.236,Carry Out NDT & Vaccuum Box Test,6935,352,0,24,0,320,320,24,200,0,200,,,,2012-12-21 10:30,2012-12-23 17:00,,2012-11-13 11:00,2012-11-15 15:00,2012-11-13 11:00,2012-11-15 15:00,2012-11-13 11:00,2012-11-15 15:00,2012-12-21 10:30,2012-12-23 17:00,,PT_Normal,,,,,26kMElvIfkuN3joEscWHGg,TJThdccDb02ykkVKXx6c/Q,,,N,0,0,,,2013-11-05 11:09,2013-11-05 11:09,admin,admin,
330,102047,4512,26119,6590,0,N,N,N,CP_Drtn,TT_Task,DT_FixedDUR2,TK_NotStart,JF721.308,FInal Inspection & Hand over to client,6915,352,0,32,0,240,240,32,60,0,60,,,,2013-08-10 10:00,2013-08-13 12:00,,2013-07-03 08:00,2013-07-06 15:00,2013-07-03 08:00,2013-07-06 15:00,2013-07-03 08:00,2013-07-06 15:00,2013-08-10 10:00,2013-08-13 12:00,,PT_Normal,,,,,c4VQzNkhfkyAQg6FR/T5HA,I9JlI74c8UyY7wb7nq2A5Q,,,N,0,0,,,2013-11-05 11:09,2013-11-05 11:09,admin,admin,
331,102048,4512,26120,6590,0,N,N,N,CP_Drtn,TT_FinMile,DT_FixedDrtn,TK_NotStart,2.7,Complete MOBILIZATION of camp with Catering and accommodation facilities,,384,0,0,0,0,0,0,0,0,0,,,,2012-09-09 17:00,2012-09-09 17:00,,2012-07-27 10:30,2012-07-27 10:30,2012-07-27 10:30,2012-07-27 10:30,2012-07-27 10:30,2012-07-27 10:30,2012-09-09 17:00,2012-09-09 17:00,,PT_Normal,,,,,c0vS4BTRJ0qniKvYs2TZEg,,,,N,0,0,,,2013-11-05 11:09,2013-11-05 11:09,admin,admin,
332,102049,4512,26121,6590,0,N,N,N,CP_Drtn,TT_FinMile,DT_FixedDrtn,TK_NotStart,2.9,Complete COnstruction of Civil/Structural works,,384,32,0,0,0,0,0,0,0,0,,,,2012-10-28 17:00,2012-10-28 17:00,,2012-09-16 08:00,2012-09-16 08:00,2012-09-16 08:00,2012-09-16 08:00,2012-09-16 08:00,2012-09-16 08:00,2012-10-28 17:00,2012-10-28 17:00,,PT_Normal,,,,,d5TNZ0PEAES/DV3QUVd98A,,,,N,0,0,,,2013-11-05 11:09,2013-11-05 11:09,admin,admin,
333,102050,4512,26122,6590,0,N,N,N,CP_Drtn,TT_FinMile,DT_FixedDrtn,TK_NotStart,2.B,MCC,,352,0,0,0,0,0,0,0,0,0,,,,2013-04-04 11:00,2013-04-04 11:00,,2013-02-25 14:00,2013-02-25 14:00,2013-02-25 14:00,2013-02-25 14:00,2013-02-25 14:00,2013-02-25 14:00,2013-04-04 11:00,2013-04-04 11:00,,PT_Normal,,,,,AXO7zrAvkkuW/7KO/idsLw,,,,N,0,0,,,2013-11-05 11:09,2013-11-05 11:09,admin,admin,
334,102051,4512,26123,6590,0,N,N,N,CP_Drtn,TT_FinMile,DT_FixedDrtn,TK_NotStart,4.B,Final Testing,,360,0,0,0,0,0,0,0,0,0,,,,2013-05-14 09:00,2013-05-14 09:00,,2013-04-05 11:30,2013-04-05 11:30,2013-04-05 11:30,2013-04-05 11:30,2013-04-05 11:30,2013-04-05 11:30,2013-05-14 09:00,2013-05-14 09:00,,PT_Normal,,,,,ofZnzRZ6dUmW7QGQKlraxw,,,,N,0,0,,,2013-11-05 11:09,2013-11-05 11:09,admin,admin,
335,102052,4512,26124,6590,0,N,N,N,CP_Drtn,TT_FinMile,DT_FixedDrtn,TK_NotStart,2.10,Complete Installation,,352,0,0,0,0,0,0,0,0,0,,,,2013-07-24 13:00,2013-07-24 13:00,,2013-06-16 16:00,2013-06-16 16:00,2013-06-16 16:00,2013-06-16 16:00,2013-06-16 16:00,2013-06-16 16:00,2013-07-24 13:00,2013-07-24 13:00,,PT_Normal,,,,,MOmph4Aso0e1gfteNpw7Ww,,,,N,0,0,,,2013-11-05 11:09,2013-11-05 11:09,admin,admin,
336,102053,4512,26125,6590,0,N,N,N,CP_Drtn,TT_FinMile,DT_FixedDrtn,TK_NotStart,3.B,Third Party,,352,0,0,0,0,0,0,0,0,0,,,,2013-08-10 10:00,2013-08-10 10:00,,2013-07-03 08:00,2013-07-03 08:00,2013-07-03 08:00,2013-07-03 08:00,2013-07-03 08:00,2013-07-03 08:00,2013-08-10 10:00,2013-08-10 10:00,,PT_Normal,,,,,bk4ODF2p3Uet5svuORGzIQ,,,,N,0,0,,,2013-11-05 11:09,2013-11-05 11:09,admin,admin,
337,102054,4512,26126,6590,0,N,N,N,CP_Drtn,TT_FinMile,DT_FixedDrtn,TK_NotStart,6.B,Project Completion,,352,80,0,0,0,0,0,0,0,0,,,,2013-08-13 12:00,2013-08-13 12:00,,2013-07-06 15:00,2013-07-06 15:00,2013-07-06 15:00,2013-07-06 15:00,2013-07-06 15:00,2013-07-06 15:00,2013-08-13 12:00,2013-08-13 12:00,,PT_Normal,,,,,Am00P0tfnE283pwQPhWxtQ,,,,N,0,0,,,2013-11-05 11:09,2013-11-05 11:09,admin,admin,
338,102055,4512,26129,6590,0,N,N,N,CP_Drtn,TT_Task,DT_FixedDUR2,TK_NotStart,JF721.2,60% Submittal,6917,432,0,8,0,8,8,8,0,0,0,,,,2012-08-16 15:00,2012-08-18 08:00,,2012-07-01 13:00,2012-07-02 11:00,2012-07-01 13:00,2012-07-02 11:00,2012-07-01 13:00,2012-07-02 11:00,2012-08-16 15:00,2012-08-18 08:00,,PT_Normal,,,,,DFnZ62+LyE2BKr/PPpNcpg,,,,N,0,0,,,2013-11-05 11:09,2013-11-05 11:09,admin,admin,
339,102056,4512,26129,6590,0,N,N,N,CP_Drtn,TT_Task,DT_FixedDUR2,TK_NotStart,JF721.3,60% Comments Incooperation,6917,432,0,56,0,56,56,56,0,0,0,,,,2012-08-18 08:00,2012-08-27 09:00,,2012-07-02 11:00,2012-07-08 12:00,2012-07-02 11:00,2012-07-08 12:00,2012-07-02 11:00,2012-07-08 12:00,2012-08-18 08:00,2012-08-27 09:00,,PT_Normal,,,,,0hqhaxL3dEWHtn8yFUfVog,,,,N,0,0,,,2013-11-05 11:09,2013-11-05 11:09,admin,admin,
340,102057,4512,26129,6590,0,N,N,N,CP_Drtn,TT_Task,DT_FixedDUR2,TK_NotStart,JF721.4,90% Submittal,6917,432,0,8,0,8,8,8,0,0,0,,,,2012-08-27 09:00,2012-08-27 17:00,,2012-07-08 12:00,2012-07-09 10:00,2012-07-08 12:00,2012-07-09 10:00,2012-07-08 12:00,2012-07-09 10:00,2012-08-27 09:00,2012-08-27 17:00,,PT_Normal,,,,,BC9B7pU+mkuucQuIiQPr8Q,,,,N,0,0,,,2013-11-05 11:09,2013-11-05 11:09,admin,admin,
341,102058,4512,26129,6590,0,N,N,N,CP_Drtn,TT_Task,DT_FixedDUR2,TK_NotStart,JF721.5,90% Comments Incooperation,6917,432,0,56,0,56,56,56,0,0,0,,,,2012-08-28 07:00,2012-09-03 08:00,,2012-07-09 10:00,2012-07-15 11:00,2012-07-09 10:00,2012-07-15 11:00,2012-07-09 10:00,2012-07-15 11:00,2012-08-28 07:00,2012-09-03 08:00,,PT_Normal,,,,,1Ik6uaUuwUWMjEbuEEH3Og,,,,N,0,0,,,2013-11-05 11:09,2013-11-05 11:09,admin,admin,
342,102059,4512,26129,6590,0,N,N,N,CP_Drtn,TT_Task,DT_FixedDUR2,TK_NotStart,JF721.6,IFC,6917,432,0,24,0,24,24,24,0,0,0,,,,2012-09-03 08:00,2012-09-05 12:00,,2012-07-15 11:00,2012-07-17 15:00,2012-07-15 11:00,2012-07-17 15:00,2012-07-15 11:00,2012-07-17 15:00,2012-09-03 08:00,2012-09-05 12:00,,PT_Normal,,,,,1Ynzgv/gjkyK1BSiJCWZBw,,,,N,0,0,,,2013-11-05 11:09,2013-11-05 11:09,admin,admin,
343,102060,4512,26171,6590,0,N,N,N,CP_Drtn,TT_Task,DT_FixedDrtn,TK_NotStart,JF721.1,Soil Investigation Works,6911,0,0,16,0,20,20,16,0,0,0,,,,2012-06-30 07:00,2012-07-01 13:00,,2012-06-30 07:00,2012-07-01 13:00,2012-06-30 07:00,2012-07-01 13:00,2012-06-30 07:00,2012-07-01 13:00,2012-06-30 07:00,2012-07-01 13:00,,PT_Normal,,,,,fiVXOZNdbkCavRjPoe0UQQ,,,,Y,0,0,,,2013-11-05 11:09,2013-11-05 11:09,admin,admin,
344,102061,4512,26131,6590,0,N,N,N,CP_Drtn,TT_Task,DT_FixedDUR2,TK_NotStart,JF721.7,60% Submittal (Tank & Foundation Drawings),6917,608,0,8,0,24,24,8,0,0,0,,,,2012-09-24 13:00,2012-09-25 11:00,,2012-07-17 15:00,2012-07-18 13:00,2012-07-17 15:00,2012-07-18 13:00,2012-07-17 15:00,2012-07-18 13:00,2012-09-24 13:00,2012-09-25 11:00,,PT_Normal,,,,,FYANt/GfN0euNbZrdFJ1cA,,,,N,0,0,,,2013-11-05 11:09,2013-11-05 11:09,admin,admin,
345,102062,4512,26131,6590,0,N,N,N,CP_Drtn,TT_Task,DT_FixedDUR2,TK_NotStart,JF721.8,60% Comments Incooperation (Tanks & Foundation Drawings),6912,608,0,40,0,120,120,40,0,0,0,,,,2012-09-25 11:00,2012-09-29 16:00,,2012-07-18 13:00,2012-07-23 08:00,2012-07-18 13:00,2012-07-23 08:00,2012-07-18 13:00,2012-07-23 08:00,2012-09-25 11:00,2012-09-29 16:00,,PT_Normal,,,,,LbTkJDmC3EyF6HOwvcMxRQ,,,,N,0,0,,,2013-11-05 11:09,2013-11-05 11:09,admin,admin,
346,102063,4512,26131,6590,0,N,N,N,CP_Drtn,TT_Task,DT_FixedDUR2,TK_NotStart,JF721.9,90% Submittal (Tanks & Foundation Drawings),6912,608,0,8,0,24,24,8,0,0,0,,,,2012-09-29 16:00,2012-09-30 14:00,,2012-07-23 08:00,2012-07-23 16:00,2012-07-23 08:00,2012-07-23 16:00,2012-07-23 08:00,2012-07-23 16:00,2012-09-29 16:00,2012-09-30 14:00,,PT_Normal,,,,,kI3NEwzDMUmYw7SLzw8s8w,,,,N,0,0,,,2013-11-05 11:09,2013-11-05 11:09,admin,admin,
347,102064,4512,26131,6590,0,N,N,N,CP_Drtn,TT_Task,DT_FixedDUR2,TK_NotStart,JF721.10,90% Comments Incooperation (Tanks & Foundation Drawings),6917,608,0,16,0,48,48,16,0,0,0,,,,2012-09-30 14:00,2012-10-02 10:00,,2012-07-23 16:00,2012-07-25 12:00,2012-07-23 16:00,2012-07-25 12:00,2012-07-23 16:00,2012-07-25 12:00,2012-09-30 14:00,2012-10-02 10:00,,PT_Normal,,,,,LC+R/C67y0CWVpfaOHhJxw,,,,N,0,0,,,2013-11-05 11:09,2013-11-05 11:09,admin,admin,
348,102065,4512,26131,6590,0,N,N,N,CP_Drtn,TT_Task,DT_FixedDUR2,TK_NotStart,JF721.11,IFC,6913,616,0,8,0,24,24,8,0,0,0,,,,2012-10-03 08:00,2012-10-03 16:00,,2012-07-25 12:00,2012-07-26 10:00,2012-07-25 12:00,2012-07-26 10:00,2012-07-25 12:00,2012-07-26 10:00,2012-10-03 08:00,2012-10-03 16:00,,PT_Normal,,,,,1OijmVLDEkimWMIvNl5aMg,,,,N,0,0,,,2013-11-05 11:09,2013-11-05 11:09,admin,admin,
349,102066,4512,26132,6590,0,N,N,N,CP_Drtn,TT_FinMile,DT_FixedDrtn,TK_NotStart,1.2,Complete survey and Geotechnical Investigation for both Master Pump Station,,432,0,0,0,0,0,0,0,0,0,,,,2012-08-16 15:00,2012-08-16 15:00,,2012-07-01 13:00,2012-07-01 13:00,2012-07-01 13:00,2012-07-01 13:00,2012-07-01 13:00,2012-07-01 13:00,2012-08-16 15:00,2012-08-16 15:00,,PT_Normal,,,,,My3TwRJG3UGiAEsb9bRkZQ,,,,N,0,0,,,2013-11-05 11:09,2013-11-05 11:09,admin,admin,
350,102067,4512,26133,6590,0,N,N,N,CP_Drtn,TT_FinMile,DT_FixedDrtn,TK_NotStart,1.3,Complete Engineering design and Calculations,,608,0,0,0,0,0,0,0,0,0,,,,2012-09-24 13:00,2012-09-24 13:00,,2012-07-17 15:00,2012-07-17 15:00,2012-07-17 15:00,2012-07-17 15:00,2012-07-17 15:00,2012-07-17 15:00,2012-09-24 13:00,2012-09-24 13:00,,PT_Normal,,,,,heOcy9RLEEWgoHCxp5ngoA,,,,N,0,0,,,2013-11-05 11:09,2013-11-05 11:09,admin,admin,
351,102068,4512,26134,6590,0,N,N,N,CP_Drtn,TT_FinMile,DT_FixedDrtn,TK_NotStart,1.4,Complete Fabrication and GA Drawing with Bill of Quantities,,616,8,0,0,0,0,0,0,0,0,,,,2012-10-03 16:00,2012-10-03 16:00,,2012-07-26 10:00,2012-07-26 10:00,2012-07-26 10:00,2012-07-26 10:00,2012-07-26 10:00,2012-07-26 10:00,2012-10-03 16:00,2012-10-03 16:00,,PT_Normal,,,,,Z1TUGDo+nEOcaxJOX4b+Zg,,,,N,0,0,,,2013-11-05 11:09,2013-11-05 11:09,admin,admin,
352,102069,4512,26136,6590,0,N,N,N,CP_Drtn,TT_Task,DT_FixedDUR2,TK_NotStart,JF721.28,Approval for Vendor Drawings & Specifications,,608,0,48,0,0,0,48,0,0,0,,,,2012-10-03 16:00,2012-10-09 09:00,,2012-07-27 10:30,2012-08-01 11:00,2012-07-27 10:30,2012-08-01 11:00,2012-07-27 10:30,2012-08-01 11:00,2012-10-03 16:00,2012-10-09 09:00,,PT_Normal,,,,,IJNlzmFE1U2CyfpuxsGOYQ,,,,N,0,0,,,2013-11-05 11:09,2013-11-05 11:09,admin,admin,
353,102070,4512,26136,6590,0,N,N,N,CP_Drtn,TT_Task,DT_FixedDUR2,TK_NotStart,JF721.29,PO  Issued,,1232,0,136,0,0,0,136,0,0,0,,,,2012-12-17 08:00,2012-12-31 14:00,,2012-08-01 11:00,2012-08-15 17:00,2012-08-01 11:00,2012-08-15 17:00,2012-08-01 11:00,2012-08-15 17:00,2012-12-17 08:00,2012-12-31 14:00,,PT_Normal,,,,,DXO0NYe/gEundPfBasqxUQ,,,,N,0,0,,,2013-11-05 11:09,2013-11-05 11:09,admin,admin,
354,102071,4512,26137,6590,0,N,N,N,CP_Drtn,TT_Task,DT_FixedDUR2,TK_NotStart,JF721.34,Plates,,432,0,736,0,0,0,736,0,0,0,,,,2012-09-10 15:00,2012-11-30 13:30,,2012-07-23 08:00,2012-10-13 14:00,2012-07-23 08:00,2012-10-13 14:00,2012-07-23 08:00,2012-10-13 14:00,2012-09-10 15:00,2012-11-30 13:30,,PT_Normal,,,,,UN1c9MGW9kqjyA4NKGZNbA,,,,N,0,0,,,2013-11-05 11:09,2013-11-05 11:09,admin,admin,
355,102072,4512,26137,6590,0,N,N,N,CP_Drtn,TT_Task,DT_FixedDUR2,TK_NotStart,JF721.35,Profile Material,,1232,0,296,0,0,0,296,0,0,0,,,,2012-12-31 14:00,2013-01-31 12:00,,2012-08-16 07:00,2012-09-20 08:00,2012-08-16 07:00,2012-09-20 08:00,2012-08-16 07:00,2012-09-20 08:00,2012-12-31 14:00,2013-01-31 12:00,,PT_Normal,,,,,syqrl5K+bUSbCWRoKWWi1g,,,,N,0,0,,,2013-11-05 11:09,2013-11-05 11:09,admin,admin,
356,102073,4512,26137,6590,0,N,N,N,CP_Drtn,TT_Task,DT_FixedDUR2,TK_NotStart,JF721.36,Pipes & Fittings,,608,0,136,0,0,0,136,0,0,0,,,,2012-10-14 12:00,2012-10-30 13:00,,2012-08-06 14:00,2012-08-24 12:30,2012-08-06 14:00,2012-08-24 12:30,2012-08-06 14:00,2012-08-24 12:30,2012-10-14 12:00,2012-10-30 13:00,,PT_Normal,,,,,3nFZ6gJnhU2/SSrks7Ie4A,,,,N,0,0,,,2013-11-05 11:09,2013-11-05 11:09,admin,admin,
357,102074,4512,26138,6590,0,N,N,N,CP_Drtn,TT_Task,DT_FixedDUR2,TK_NotStart,JF721.37,Define Layout,,432,0,24,0,0,0,24,0,0,0,,,,2012-10-19 12:30,2012-10-22 09:00,,2012-09-03 08:00,2012-09-05 12:00,2012-09-03 08:00,2012-09-05 12:00,2012-09-03 08:00,2012-09-05 12:00,2012-10-19 12:30,2012-10-22 09:00,,PT_Normal,,,,,uCgTTglcPUqjGJ4PEzXf9Q,,,,N,0,0,,,2013-11-05 11:09,2013-11-05 11:09,admin,admin,
358,102075,4512,26138,6590,0,N,N,N,CP_Drtn,TT_Task,DT_FixedDUR2,TK_NotStart,JF721.38,Cutting,,432,0,24,0,0,0,24,0,0,0,,,,2012-10-19 12:30,2012-10-22 09:00,,2012-09-03 08:00,2012-09-05 12:00,2012-09-03 08:00,2012-09-05 12:00,2012-09-03 08:00,2012-09-05 12:00,2012-10-19 12:30,2012-10-22 09:00,,PT_Normal,,,,,B7Is/ZLQc02fEm3Emz999Q,,,,N,0,0,,,2013-11-05 11:09,2013-11-05 11:09,admin,admin,
359,102076,4512,26138,6590,0,N,N,N,CP_Drtn,TT_Task,DT_FixedDUR2,TK_NotStart,JF721.39,Fit-up,,432,0,32,0,0,0,32,0,0,0,,,,2012-10-22 09:00,2012-10-25 11:00,,2012-09-05 12:00,2012-09-09 09:00,2012-09-05 12:00,2012-09-09 09:00,2012-09-05 12:00,2012-09-09 09:00,2012-10-22 09:00,2012-10-25 11:00,,PT_Normal,,,,,mqZe1r6gkkSzcfsxcz7Mpg,,,,N,0,0,,,2013-11-05 11:09,2013-11-05 11:09,admin,admin,
360,102077,4512,26138,6590,0,N,N,N,CP_Drtn,TT_Task,DT_FixedDUR2,TK_NotStart,JF721.40,Welding,,432,0,32,0,0,0,32,0,0,0,,,,2012-10-23 07:00,2012-10-28 09:00,,2012-09-06 10:00,2012-09-09 17:00,2012-09-06 10:00,2012-09-09 17:00,2012-09-06 10:00,2012-09-09 17:00,2012-10-23 07:00,2012-10-28 09:00,,PT_Normal,,,,,jpR98Teg702NwidVe3Ea4w,,,,N,0,0,,,2013-11-05 11:09,2013-11-05 11:09,admin,admin,
361,102078,4512,26138,6590,0,N,N,N,CP_Drtn,TT_Task,DT_FixedDUR2,TK_NotStart,JF721.41,Shop Blasting/Painting,,432,0,32,0,0,0,32,0,0,0,,,,2012-10-23 15:00,2012-10-28 17:00,,2012-09-07 10:30,2012-09-10 15:00,2012-09-07 10:30,2012-09-10 15:00,2012-09-07 10:30,2012-09-10 15:00,2012-10-23 15:00,2012-10-28 17:00,,PT_Normal,,,,,dIwtJ56XpE6kabeeMqB0rA,,,,N,0,0,,,2013-11-05 11:09,2013-11-05 11:09,admin,admin,
362,102079,4512,26138,6590,0,N,N,N,CP_Drtn,TT_Task,DT_FixedDUR2,TK_NotStart,JF721.42,Inspect & Accept for use,,432,0,24,0,0,0,24,0,0,0,,,,2012-10-29 07:00,2012-10-31 11:00,,2012-09-10 15:00,2012-09-13 09:00,2012-09-10 15:00,2012-09-13 09:00,2012-09-10 15:00,2012-09-13 09:00,2012-10-29 07:00,2012-10-31 11:00,,PT_Normal,,,,,+t9WbO/+S0et7FuMQHcX/w,,,,N,0,0,,,2013-11-05 11:09,2013-11-05 11:09,admin,admin,
363,102080,4512,26139,6590,0,N,N,N,CP_Drtn,TT_Task,DT_FixedDUR2,TK_NotStart,JF721.18,PO Issued,,728,0,24,0,0,0,24,0,0,0,,,,2012-09-29 16:00,2012-10-02 10:00,,2012-07-10 08:00,2012-07-12 12:00,2012-07-10 08:00,2012-07-12 12:00,2012-07-10 08:00,2012-07-12 12:00,2012-09-29 16:00,2012-10-02 10:00,,PT_Normal,,,,,ffd16zzdR0mQcoOcft8dZA,,,,N,0,0,,,2013-11-05 11:09,2013-11-05 11:09,admin,admin,
364,102081,4512,26139,6590,0,N,N,N,CP_Drtn,TT_Task,DT_FixedDUR2,TK_NotStart,JF721.19,Ma'aden Site Delievery,,728,168,64,0,0,0,64,0,0,0,,,,2012-10-02 10:00,2012-10-09 09:00,,2012-07-12 12:00,2012-07-19 11:00,2012-07-12 12:00,2012-07-19 11:00,2012-07-12 12:00,2012-07-19 11:00,2012-10-02 10:00,2012-10-09 09:00,,PT_Normal,,,,,JI4zorBCD0eq84uE+vzfTQ,,,,N,0,0,,,2013-11-05 11:09,2013-11-05 11:09,admin,admin,
365,102082,4512,26140,6590,0,N,N,N,CP_Drtn,TT_Task,DT_FixedDUR2,TK_NotStart,JF721.20,Approval For Vendor Drawings & Specifications,,608,0,24,0,0,0,24,0,0,0,,,,2012-10-01 12:00,2012-10-03 16:00,,2012-07-24 14:00,2012-07-27 10:30,2012-07-24 14:00,2012-07-27 10:30,2012-07-24 14:00,2012-07-27 10:30,2012-10-01 12:00,2012-10-03 16:00,,PT_Normal,,,,,t03DpeXNvU6QqcTh2dX2Fw,,,,N,0,0,,,2013-11-05 11:09,2013-11-05 11:09,admin,admin,
366,102083,4512,26140,6590,0,N,N,N,CP_Drtn,TT_Task,DT_FixedDUR2,TK_NotStart,JF721.21,P.O Issued,,1384,0,216,0,0,0,216,0,0,0,,,,2012-12-28 09:30,2013-01-20 13:00,,2012-07-27 10:30,2012-08-22 14:00,2012-07-27 10:30,2012-08-22 14:00,2012-07-27 10:30,2012-08-22 14:00,2012-12-28 09:30,2013-01-20 13:00,,PT_Normal,,,,,kFnrkapys0myahdR4sbufA,,,,N,0,0,,,2013-11-05 11:09,2013-11-05 11:09,admin,admin,
367,102084,4512,26182,6590,0,N,N,N,CP_Drtn,TT_Task,DT_FixedDUR2,TK_NotStart,JF721.12,PO Issued,,560,0,24,0,0,0,24,0,0,0,,,,2012-09-03 08:00,2012-09-05 12:00,,2012-07-01 13:00,2012-07-03 17:00,2012-07-01 13:00,2012-07-03 17:00,2012-07-01 13:00,2012-07-03 17:00,2012-09-03 08:00,2012-09-05 12:00,,PT_Normal,,,,,WDpmeSKjY0Ox6eqPI/EZlw,,,,N,0,0,,,2013-11-05 11:09,2013-11-05 11:09,admin,admin,
368,102085,4512,26182,6590,0,N,N,N,CP_Drtn,TT_Task,DT_FixedDUR2,TK_NotStart,JF721.13,Ma'aden Site Delievery,,560,0,56,0,0,0,56,0,0,0,,,,2012-09-05 12:00,2012-09-11 13:00,,2012-07-04 07:00,2012-07-10 08:00,2012-07-04 07:00,2012-07-10 08:00,2012-07-04 07:00,2012-07-10 08:00,2012-09-05 12:00,2012-09-11 13:00,,PT_Normal,,,,,fAeFyQwkoE6xlFmF2C4R/g,,,,N,0,0,,,2013-11-05 11:09,2013-11-05 11:09,admin,admin,
369,102086,4512,26224,6590,0,N,N,N,CP_Drtn,TT_Task,DT_FixedDUR2,TK_NotStart,JF721.14,Approval for Vendor Drawings & SPecifications,,608,0,24,0,0,0,24,0,0,0,,,,2012-10-01 12:00,2012-10-03 16:00,,2012-07-24 14:00,2012-07-27 10:30,2012-07-24 14:00,2012-07-27 10:30,2012-07-24 14:00,2012-07-27 10:30,2012-10-01 12:00,2012-10-03 16:00,,PT_Normal,,,,,R09ct9ZQsku/8ZuHCyMYWw,,,,N,0,0,,,2013-11-05 11:09,2013-11-05 11:09,admin,admin,
370,102087,4512,26224,6590,0,N,N,N,CP_Drtn,TT_Task,DT_FixedDUR2,TK_NotStart,JF721.15,PO Issued,,1384,0,216,0,0,0,216,0,0,0,,,,2012-12-28 09:30,2013-01-20 13:00,,2012-07-27 10:30,2012-08-22 14:00,2012-07-27 10:30,2012-08-22 14:00,2012-07-27 10:30,2012-08-22 14:00,2012-12-28 09:30,2013-01-20 13:00,,PT_Normal,,,,,mTvBliz4KkW6SRjH3v5B7w,,,,N,0,0,,,2013-11-05 11:09,2013-11-05 11:09,admin,admin,
371,102088,4512,26224,6590,0,N,N,N,CP_Drtn,TT_Task,DT_FixedDUR2,TK_NotStart,JF721.16,CP System Delievered to Ma'aden Site & Installed,6942,432,0,120,0,1000,1000,120,400,0,400,,,,2013-06-07 10:30,2013-06-20 08:00,,2013-04-21 16:00,2013-05-04 16:00,2013-04-21 16:00,2013-05-04 16:00,2013-04-21 16:00,2013-05-04 16:00,2013-06-07 10:30,2013-06-20 08:00,,PT_Normal,,,,,xGXcn0kOaky4O9ijdxPQaA,,,,N,0,0,,,2013-11-05 11:09,2013-11-05 11:09,admin,admin,
372,102089,4512,26224,6590,0,N,N,N,CP_Drtn,TT_Task,DT_FixedDUR2,TK_NotStart,JF721.17,Ma'aden CP Inspection,6942,432,0,24,0,100,100,24,40,0,40,,,,2013-06-20 08:00,2013-06-22 17:00,,2013-05-04 16:00,2013-05-07 10:00,2013-05-04 16:00,2013-05-07 10:00,2013-05-04 16:00,2013-05-07 10:00,2013-06-20 08:00,2013-06-22 17:00,,PT_Normal,,,,,sLUSJ0gvdEK/S6uTJVYirw,,,,N,0,0,,,2013-11-05 11:09,2013-11-05 11:09,admin,admin,
373,102090,4512,26184,6590,0,N,N,N,CP_Drtn,TT_Task,DT_FixedDUR2,TK_NotStart,JF721.26,Approve Vendor Drawings & Specifcations,,432,0,24,0,0,0,24,0,0,0,,,,2012-09-05 12:00,2012-09-08 11:00,,2012-07-17 15:00,2012-07-20 11:30,2012-07-17 15:00,2012-07-20 11:30,2012-07-17 15:00,2012-07-20 11:30,2012-09-05 12:00,2012-09-08 11:00,,PT_Normal,,,,,hSKQeb5Y80m8d5vQoRf+RA,,,,N,0,0,,,2013-11-05 11:09,2013-11-05 11:09,admin,admin,
374,102091,4512,26184,6590,0,N,N,N,CP_Drtn,TT_Task,DT_FixedDUR2,TK_NotStart,JF721.27,P.O Issued,,432,0,24,0,0,0,24,0,0,0,,,,2012-09-08 11:00,2012-09-10 15:00,,2012-07-20 11:30,2012-07-23 08:00,2012-07-20 11:30,2012-07-23 08:00,2012-07-20 11:30,2012-07-23 08:00,2012-09-08 11:00,2012-09-10 15:00,,PT_Normal,,,,,9TRO5+LU+ka2BTk2xCb79Q,,,,N,0,0,,,2013-11-05 11:09,2013-11-05 11:09,admin,admin,
375,102092,4512,26144,6590,0,N,N,N,CP_Drtn,TT_Task,DT_FixedDUR2,TK_NotStart,JF721.43,Define Layout,,864,0,32,0,0,0,32,0,0,0,,,,2012-12-09 11:00,2012-12-12 13:00,,2012-09-05 12:00,2012-09-09 09:00,2012-09-05 12:00,2012-09-09 09:00,2012-09-05 12:00,2012-09-09 09:00,2012-12-09 11:00,2012-12-12 13:00,,PT_Normal,,,,,uHOcQw7Vhk2PaKV6vDZSiA,,,,N,0,0,,,2013-11-05 11:09,2013-11-05 11:09,admin,admin,
376,102093,4512,26144,6590,0,N,N,N,CP_Drtn,TT_Task,DT_FixedDUR2,TK_NotStart,JF721.44,Cutting,,864,0,40,0,0,0,40,0,0,0,,,,2012-12-09 11:00,2012-12-13 11:00,,2012-09-05 12:00,2012-09-09 17:00,2012-09-05 12:00,2012-09-09 17:00,2012-09-05 12:00,2012-09-09 17:00,2012-12-09 11:00,2012-12-13 11:00,,PT_Normal,,,,,QaGdkUltxE2k4bpwYnNUiQ,,,,N,0,0,,,2013-11-05 11:09,2013-11-05 11:09,admin,admin,
377,102094,4512,26144,6590,0,N,N,N,CP_Drtn,TT_Task,DT_FixedDUR2,TK_NotStart,JF721.45,Bevelling/Rolling,,864,0,48,0,0,0,48,0,0,0,,,,2012-12-11 07:00,2012-12-16 10:00,,2012-09-07 10:30,2012-09-12 11:00,2012-09-07 10:30,2012-09-12 11:00,2012-09-07 10:30,2012-09-12 11:00,2012-12-11 07:00,2012-12-16 10:00,,PT_Normal,,,,,YVjj9zd5rESiv1U/EzGjug,,,,N,0,0,,,2013-11-05 11:09,2013-11-05 11:09,admin,admin,
378,102095,4512,26144,6590,0,N,N,N,CP_Drtn,TT_Task,DT_FixedDUR2,TK_NotStart,JF721.46,Shop Blasting/Painting,,864,0,48,0,0,0,48,0,0,0,,,,2012-12-13 11:00,2012-12-18 14:00,,2012-09-10 07:00,2012-09-15 10:00,2012-09-10 07:00,2012-09-15 10:00,2012-09-10 07:00,2012-09-15 10:00,2012-12-13 11:00,2012-12-18 14:00,,PT_Normal,,,,,tadtpSsrDkGsDa5mO+OMuw,,,,N,0,0,,,2013-11-05 11:09,2013-11-05 11:09,admin,admin,
379,102096,4512,26144,6590,0,N,N,N,CP_Drtn,TT_Task,DT_FixedDUR2,TK_NotStart,JF721.47,Inspect & Accept for use,,864,0,32,0,0,0,32,0,0,0,,,,2012-12-18 14:00,2012-12-22 11:00,,2012-09-15 10:00,2012-09-18 12:00,2012-09-15 10:00,2012-09-18 12:00,2012-09-15 10:00,2012-09-18 12:00,2012-12-18 14:00,2012-12-22 11:00,,PT_Normal,,,,,6aAynb1KzEK+c3MhQFSFVg,,,,N,0,0,,,2013-11-05 11:09,2013-11-05 11:09,admin,admin,
380,102097,4512,26145,6590,0,N,N,N,CP_Drtn,TT_Task,DT_FixedDUR2,TK_NotStart,JF721.30,Approval for Vendor Drawings & Specifications,,608,0,48,0,0,0,48,0,0,0,,,,2012-10-03 16:00,2012-10-09 09:00,,2012-07-27 10:30,2012-08-01 11:00,2012-07-27 10:30,2012-08-01 11:00,2012-07-27 10:30,2012-08-01 11:00,2012-10-03 16:00,2012-10-09 09:00,,PT_Normal,,,,,N/En/2M5UUWKTMx/DT+bpg,,,,N,0,0,,,2013-11-05 11:09,2013-11-05 11:09,admin,admin,
381,102098,4512,26145,6590,0,N,N,N,CP_Drtn,TT_Task,DT_FixedDUR2,TK_NotStart,JF721.31,PO issued,,608,0,48,0,0,0,48,0,0,0,,,,2012-10-09 09:00,2012-10-14 12:00,,2012-08-01 11:00,2012-08-06 14:00,2012-08-01 11:00,2012-08-06 14:00,2012-08-01 11:00,2012-08-06 14:00,2012-10-09 09:00,2012-10-14 12:00,,PT_Normal,,,,,6ciCotd9m0a7Ua+U4M/Diw,,,,N,0,0,,,2013-11-05 11:09,2013-11-05 11:09,admin,admin,
382,102099,4512,26146,6590,0,N,N,N,CP_Drtn,TT_Task,DT_FixedDUR2,TK_NotStart,JF721.48,Define layout,,1232,0,24,0,0,0,24,0,0,0,,,,2013-01-31 12:00,2013-02-03 11:00,,2012-09-20 08:00,2012-09-22 17:00,2012-09-20 08:00,2012-09-22 17:00,2012-09-20 08:00,2012-09-22 17:00,2013-01-31 12:00,2013-02-03 11:00,,PT_Normal,,,,,RPd08yJpI0ya4vqQ1yibDg,,,,N,0,0,,,2013-11-05 11:09,2013-11-05 11:09,admin,admin,
383,102100,4512,26146,6590,0,N,N,N,CP_Drtn,TT_Task,DT_FixedDUR2,TK_NotStart,JF721.49,Cutting,,1232,0,32,0,0,0,32,0,0,0,,,,2013-02-03 11:00,2013-02-06 13:00,,2012-09-23 07:00,2012-09-26 09:00,2012-09-23 07:00,2012-09-26 09:00,2012-09-23 07:00,2012-09-26 09:00,2013-02-03 11:00,2013-02-06 13:00,,PT_Normal,,,,,vizSc95NqkiD7/rBKDN4Mw,,,,N,0,0,,,2013-11-05 11:09,2013-11-05 11:09,admin,admin,
384,102101,4512,26146,6590,0,N,N,N,CP_Drtn,TT_Task,DT_FixedDUR2,TK_NotStart,JF721.50,Bevelling,,1232,0,40,0,0,0,40,0,0,0,,,,2013-02-04 09:00,2013-02-08 11:30,,2012-09-23 15:00,2012-09-27 15:00,2012-09-23 15:00,2012-09-27 15:00,2012-09-23 15:00,2012-09-27 15:00,2013-02-04 09:00,2013-02-08 11:30,,PT_Normal,,,,,Go1Xm7JGOUWxT46Av7iB7w,,,,N,0,0,,,2013-11-05 11:09,2013-11-05 11:09,admin,admin,
385,102102,4512,26146,6590,0,N,N,N,CP_Drtn,TT_Task,DT_FixedDUR2,TK_NotStart,JF721.51,Fit-up/Welding,,1232,0,48,0,0,0,48,0,0,0,,,,2013-02-05 15:00,2013-02-11 08:00,,2012-09-25 11:00,2012-09-30 14:00,2012-09-25 11:00,2012-09-30 14:00,2012-09-25 11:00,2012-09-30 14:00,2013-02-05 15:00,2013-02-11 08:00,,PT_Normal,,,,,toGg6W4OxkCmN3IzK19C7A,,,,N,0,0,,,2013-11-05 11:09,2013-11-05 11:09,admin,admin,
386,102103,4512,26146,6590,0,N,N,N,CP_Drtn,TT_Task,DT_FixedDUR2,TK_NotStart,JF721.52,Shop Blasting/Painting,,1232,0,48,0,0,0,48,0,0,0,,,,2013-02-08 11:30,2013-02-13 12:00,,2012-09-27 15:00,2012-10-03 08:00,2012-09-27 15:00,2012-10-03 08:00,2012-09-27 15:00,2012-10-03 08:00,2013-02-08 11:30,2013-02-13 12:00,,PT_Normal,,,,,G8FbO0UsMU62o+yWCZx2oA,,,,N,0,0,,,2013-11-05 11:09,2013-11-05 11:09,admin,admin,
387,102104,4512,26146,6590,0,N,N,N,CP_Drtn,TT_Task,DT_FixedDUR2,TK_NotStart,JF721.53,Inspect & Accept for use,,1232,0,24,0,0,0,24,0,0,0,,,,2013-02-13 12:00,2013-02-16 11:00,,2012-10-03 08:00,2012-10-05 14:30,2012-10-03 08:00,2012-10-05 14:30,2012-10-03 08:00,2012-10-05 14:30,2013-02-13 12:00,2013-02-16 11:00,,PT_Normal,,,,,KNAmHcVcT0+ydB+xGgqYUg,,,,N,0,0,,,2013-11-05 11:09,2013-11-05 11:09,admin,admin,
388,102105,4512,26147,6590,0,N,N,N,CP_Drtn,TT_Task,DT_FixedDUR2,TK_NotStart,JF721.54,Define Layout,,1288,0,40,0,0,0,40,0,0,0,,,,2013-02-17 09:00,2013-02-21 09:00,,2012-09-30 14:00,2012-10-04 14:00,2012-09-30 14:00,2012-10-04 14:00,2012-09-30 14:00,2012-10-04 14:00,2013-02-17 09:00,2013-02-21 09:00,,PT_Normal,,,,,Cd++Se4K1E2D9ShjnivAuA,,,,N,0,0,,,2013-11-05 11:09,2013-11-05 11:09,admin,admin,
389,102106,4512,26147,6590,0,N,N,N,CP_Drtn,TT_Task,DT_FixedDUR2,TK_NotStart,JF721.55,Cutting,,1288,0,56,0,0,0,56,0,0,0,,,,2013-02-21 09:00,2013-02-27 10:00,,2012-10-04 14:00,2012-10-10 15:00,2012-10-04 14:00,2012-10-10 15:00,2012-10-04 14:00,2012-10-10 15:00,2013-02-21 09:00,2013-02-27 10:00,,PT_Normal,,,,,VP8vsoqVakeo7iHRyqMcQg,,,,N,0,0,,,2013-11-05 11:09,2013-11-05 11:09,admin,admin,
390,102107,4512,26147,6590,0,N,N,N,CP_Drtn,TT_Task,DT_FixedDUR2,TK_NotStart,JF721.56,Fit-Up,,1288,0,80,0,0,0,80,0,0,0,,,,2013-02-27 10:00,2013-03-07 15:00,,2012-10-10 15:00,2012-10-19 12:30,2012-10-10 15:00,2012-10-19 12:30,2012-10-10 15:00,2012-10-19 12:30,2013-02-27 10:00,2013-03-07 15:00,,PT_Normal,,,,,+iMGodFwvUGsJgoM4sgcsQ,,,,N,0,0,,,2013-11-05 11:09,2013-11-05 11:09,admin,admin,
391,102108,4512,26147,6590,0,N,N,N,CP_Drtn,TT_Task,DT_FixedDUR2,TK_NotStart,JF721.57,Welding,,1288,0,56,0,0,0,56,0,0,0,,,,2013-03-07 15:00,2013-03-13 16:00,,2012-10-19 12:30,2012-10-25 11:00,2012-10-19 12:30,2012-10-25 11:00,2012-10-19 12:30,2012-10-25 11:00,2013-03-07 15:00,2013-03-13 16:00,,PT_Normal,,,,,I1GbWF28MkycN9iSX6WPqQ,,,,N,0,0,,,2013-11-05 11:09,2013-11-05 11:09,admin,admin,
392,102109,4512,26147,6590,0,N,N,N,CP_Drtn,TT_Task,DT_FixedDUR2,TK_NotStart,JF721.58,Blasting/Painting,,1288,0,56,0,0,0,56,0,0,0,,,,2013-03-13 16:00,2013-03-19 17:00,,2012-10-25 11:00,2012-11-01 17:00,2012-10-25 11:00,2012-11-01 17:00,2012-10-25 11:00,2012-11-01 17:00,2013-03-13 16:00,2013-03-19 17:00,,PT_Normal,,,,,IiU2D1KFREijUyg6fSStFQ,,,,N,0,0,,,2013-11-05 11:09,2013-11-05 11:09,admin,admin,
393,102110,4512,26147,6590,0,N,N,N,CP_Drtn,TT_Task,DT_FixedDUR2,TK_NotStart,JF721.59,Inspect & Accept for use,,1288,0,32,0,0,0,32,0,0,0,,,,2013-03-20 07:00,2013-03-23 14:00,,2012-11-02 09:30,2012-11-05 14:00,2012-11-02 09:30,2012-11-05 14:00,2012-11-02 09:30,2012-11-05 14:00,2013-03-20 07:00,2013-03-23 14:00,,PT_Normal,,,,,OSNgzpVLVU+mQrr0npY82w,,,,N,0,0,,,2013-11-05 11:09,2013-11-05 11:09,admin,admin,
394,102111,4512,26148,6590,0,N,N,N,CP_Drtn,TT_Task,DT_FixedDUR2,TK_NotStart,JF721.22,Approval for vendor Drawings & Specifcations,,608,0,24,0,0,0,24,0,0,0,,,,2012-10-01 12:00,2012-10-03 16:00,,2012-07-24 14:00,2012-07-27 10:30,2012-07-24 14:00,2012-07-27 10:30,2012-07-24 14:00,2012-07-27 10:30,2012-10-01 12:00,2012-10-03 16:00,,PT_Normal,,,,,k4NC4RMfFEChgRa/ss81Mg,,,,N,0,0,,,2013-11-05 11:09,2013-11-05 11:09,admin,admin,
395,102112,4512,26148,6590,0,N,N,N,CP_Drtn,TT_Task,DT_FixedDUR2,TK_NotStart,JF721.23,P.O Issued,,1384,0,216,0,0,0,216,0,0,0,,,,2012-12-28 09:30,2013-01-20 13:00,,2012-07-27 10:30,2012-08-22 14:00,2012-07-27 10:30,2012-08-22 14:00,2012-07-27 10:30,2012-08-22 14:00,2012-12-28 09:30,2013-01-20 13:00,,PT_Normal,,,,,vhPPecSiskqssNMkln4ERg,,,,N,0,0,,,2013-11-05 11:09,2013-11-05 11:09,admin,admin,
396,102113,4512,26148,6590,0,N,N,N,CP_Drtn,TT_Task,DT_FixedDUR2,TK_NotStart,JF721.24,Instrumentation Delievered to Ma'aden & Installed,6965,432,0,208,0,1680,1680,208,560,0,560,,,,2013-06-23 07:00,2013-07-15 10:00,,2013-05-07 10:00,2013-05-29 13:00,2013-05-07 10:00,2013-05-29 13:00,2013-05-07 10:00,2013-05-29 13:00,2013-06-23 07:00,2013-07-15 10:00,,PT_Normal,,,,,yLDJ6Fl0d0qk1KnoEi5tiQ,,,,N,0,0,,,2013-11-05 11:09,2013-11-05 11:09,admin,admin,
397,102114,4512,26148,6590,0,N,N,N,CP_Drtn,TT_Task,DT_FixedDUR2,TK_NotStart,JF721.25,Ma'aden Instrumentation Inspection,6935,432,0,24,0,100,100,24,40,0,40,,,,2013-07-15 10:00,2013-07-17 14:00,,2013-05-29 13:00,2013-06-01 12:00,2013-05-29 13:00,2013-06-01 12:00,2013-05-29 13:00,2013-06-01 12:00,2013-07-15 10:00,2013-07-17 14:00,,PT_Normal,,,,,zpxMnl/bvUymyVeLExQqyA,,,,N,0,0,,,2013-11-05 11:09,2013-11-05 11:09,admin,admin,
398,102115,4512,26190,6590,0,N,N,N,CP_Drtn,TT_Task,DT_FixedDUR2,TK_NotStart,JF721.60,"Annular,Bottom & Sump",,432,0,24,0,0,0,24,0,0,0,,,,2012-10-31 11:00,2012-11-03 10:00,,2012-09-13 09:00,2012-09-16 08:00,2012-09-13 09:00,2012-09-16 08:00,2012-09-13 09:00,2012-09-16 08:00,2012-10-31 11:00,2012-11-03 10:00,,PT_Normal,,,,,fpHHYhhPM02j0OyEffpGhg,,,,N,0,0,,,2013-11-05 11:09,2013-11-05 11:09,admin,admin,
399,102116,4512,26190,6590,0,N,N,N,CP_Drtn,TT_Task,DT_FixedDUR2,TK_NotStart,JF721.61,"Shell Courses #1,#2,#3,#4",,864,432,64,0,0,0,64,0,0,0,,,,2012-12-22 11:00,2012-12-29 10:00,,2012-09-18 12:00,2012-09-25 11:00,2012-09-18 12:00,2012-09-25 11:00,2012-09-18 12:00,2012-09-25 11:00,2012-12-22 11:00,2012-12-29 10:00,,PT_Normal,,,,,TM0BgsSVgUmfrRVyo1NGxA,,,,N,0,0,,,2013-11-05 11:09,2013-11-05 11:09,admin,admin,
400,102117,4512,26190,6590,0,N,N,N,CP_Drtn,TT_Task,DT_FixedDUR2,TK_NotStart,JF721.62,Shell Nozzles & Manholes,,1232,800,48,0,0,0,48,0,0,0,,,,2013-02-16 11:00,2013-02-21 09:00,,2012-10-06 07:00,2012-10-10 15:00,2012-10-06 07:00,2012-10-10 15:00,2012-10-06 07:00,2012-10-10 15:00,2013-02-16 11:00,2013-02-21 09:00,,PT_Normal,,,,,TC6UQ1pvrkq1AvXZ58Lgvw,,,,N,0,0,,,2013-11-05 11:09,2013-11-05 11:09,admin,admin,
401,102118,4512,26190,6590,0,N,N,N,CP_Drtn,TT_Task,DT_FixedDUR2,TK_NotStart,JF721.63,"Platforms,Stairs & Handrails",,1288,856,72,0,0,0,72,0,0,0,,,,2013-03-23 14:00,2013-03-31 11:00,,2012-11-05 14:00,2012-11-13 11:00,2012-11-05 14:00,2012-11-13 11:00,2012-11-05 14:00,2012-11-13 11:00,2013-03-23 14:00,2013-03-31 11:00,,PT_Normal,,,,,89HT8szdDUWSKtf2t3MkDg,,,,N,0,0,,,2013-11-05 11:09,2013-11-05 11:09,admin,admin,
402,102119,4512,26190,6590,0,N,N,N,CP_Drtn,TT_Task,DT_FixedDUR2,TK_NotStart,JF721.64,Pipes & Fittings,,608,0,32,0,0,0,32,0,0,0,,,,2012-10-30 13:00,2012-11-03 10:00,,2012-08-24 12:30,2012-08-27 17:00,2012-08-24 12:30,2012-08-27 17:00,2012-08-24 12:30,2012-08-27 17:00,2012-10-30 13:00,2012-11-03 10:00,,PT_Normal,,,,,YBF+RGHgHU2j4h8lm/5i1Q,,,,N,0,0,,,2013-11-05 11:09,2013-11-05 11:09,admin,admin,
403,102120,4512,26190,6590,0,N,N,N,CP_Drtn,TT_Task,DT_FixedDUR2,TK_NotStart,JF721.65,Aluminum Dome Roof,,1384,952,736.016667,0,0,0,736.016667,0,0,0,,,,2013-01-20 13:00,2013-04-08 16:01,,2012-08-22 14:00,2012-11-11 15:01,2012-08-22 14:00,2012-11-11 15:01,2012-08-22 14:00,2012-11-11 15:01,2013-01-20 13:00,2013-04-08 16:01,,PT_Normal,,,,,1TB/Rk/hUUuPCf5fwTaUlg,,,,N,0,0,,,2013-11-05 11:09,2013-11-05 11:09,admin,admin,
404,102121,4512,26190,6590,0,N,N,N,CP_Drtn,TT_Task,DT_FixedDUR2,TK_NotStart,JF721.66,Paint Material,,696,88,32,0,0,0,32,0,0,0,,,,2012-10-30 13:00,2012-11-03 10:00,,2012-08-12 07:00,2012-08-15 09:00,2012-08-12 07:00,2012-08-15 09:00,2012-08-12 07:00,2012-08-15 09:00,2012-10-30 13:00,2012-11-03 10:00,,PT_Normal,,,,,IrVFUJGHGkugqYCier5iLQ,,,,N,0,0,,,2013-11-05 11:09,2013-11-05 11:09,admin,admin,
405,102122,4512,26191,6590,0,N,N,N,CP_Drtn,TT_Task,DT_FixedDUR2,TK_NotStart,JF721.32,Approval For vendor Specifcations,,696,0,64,0,0,0,64,0,0,0,,,,2012-10-18 12:00,2012-10-25 11:00,,2012-08-01 11:00,2012-08-08 10:00,2012-08-01 11:00,2012-08-08 10:00,2012-08-01 11:00,2012-08-08 10:00,2012-10-18 12:00,2012-10-25 11:00,,PT_Normal,,,,,H5POgdY3IkKWupELGPr1/w,,,,N,0,0,,,2013-11-05 11:09,2013-11-05 11:09,admin,admin,
406,102123,4512,26191,6590,0,N,N,N,CP_Drtn,TT_Task,DT_FixedDUR2,TK_NotStart,JF721.33,PO issued,,696,0,32,0,0,0,32,0,0,0,,,,2012-10-25 11:00,2012-10-30 13:00,,2012-08-08 10:00,2012-08-11 17:00,2012-08-08 10:00,2012-08-11 17:00,2012-08-08 10:00,2012-08-11 17:00,2012-10-25 11:00,2012-10-30 13:00,,PT_Normal,,,,,FOFdauuS0Um8H2EyZUxzcg,,,,N,0,0,,,2013-11-05 11:09,2013-11-05 11:09,admin,admin,
407,102124,4512,26151,6590,0,N,N,N,CP_Drtn,TT_FinMile,DT_FixedDrtn,TK_NotStart,1.6,Purchase Order placement for Major Materials,,1384,0,0,0,0,0,0,0,0,0,,,,2013-01-20 13:00,2013-01-20 13:00,,2012-08-22 14:00,2012-08-22 14:00,2012-08-22 14:00,2012-08-22 14:00,2012-08-22 14:00,2012-08-22 14:00,2013-01-20 13:00,2013-01-20 13:00,,PT_Normal,,,,,+HDIWxbqBk2bg8JkjpFx9A,,,,N,0,0,,,2013-11-05 11:09,2013-11-05 11:09,admin,admin,
408,102125,4512,26152,6590,0,N,N,N,CP_Drtn,TT_FinMile,DT_FixedDrtn,TK_NotStart,1.5,"Material Requisition approval for Steel plates, Cathodic Protection, field instruments etc.",,608,0,0,0,0,0,0,0,0,0,,,,2012-10-03 16:00,2012-10-03 16:00,,2012-07-27 10:30,2012-07-27 10:30,2012-07-27 10:30,2012-07-27 10:30,2012-07-27 10:30,2012-07-27 10:30,2012-10-03 16:00,2012-10-03 16:00,,PT_Normal,,,,,HNnJOX5CgUmamVg0vyuALQ,,,,N,0,0,,,2013-11-05 11:09,2013-11-05 11:09,admin,admin,
409,102126,4512,26153,6590,0,N,N,N,CP_Drtn,TT_FinMile,DT_FixedDrtn,TK_NotStart,1.11,Complete installation of Cathodic Protection and CP monitoring for the Storage Tanks.,,432,0,0,0,0,0,0,0,0,0,,,,2013-06-22 17:00,2013-06-22 17:00,,2013-05-07 10:00,2013-05-07 10:00,2013-05-07 10:00,2013-05-07 10:00,2013-05-07 10:00,2013-05-07 10:00,2013-06-22 17:00,2013-06-22 17:00,,PT_Normal,,,,,zSzX3fBJDEmHPZPW1giNKQ,,,,N,0,0,,,2013-11-05 11:09,2013-11-05 11:09,admin,admin,
410,102127,4512,26154,6590,0,N,N,N,CP_Drtn,TT_FinMile,DT_FixedDrtn,TK_NotStart,1.12,"Installation of only field instruments, which includes level transmitters and level gauges",,432,0,0,0,0,0,0,0,0,0,,,,2013-07-17 14:00,2013-07-17 14:00,,2013-06-01 12:00,2013-06-01 12:00,2013-06-01 12:00,2013-06-01 12:00,2013-06-01 12:00,2013-06-01 12:00,2013-07-17 14:00,2013-07-17 14:00,,PT_Normal,,,,,5WMqwQLP9USn2qNfwJzlyw,,,,N,0,0,,,2013-11-05 11:09,2013-11-05 11:09,admin,admin,
411,102128,4512,26155,6590,0,N,N,N,CP_Drtn,TT_FinMile,DT_FixedDrtn,TK_NotStart,1.8,Supply of Materials to Site,,608,176,0,0,0,0,0,0,0,0,,,,2012-11-03 10:00,2012-11-03 10:00,,2012-08-27 17:00,2012-08-27 17:00,2012-08-27 17:00,2012-08-27 17:00,2012-08-27 17:00,2012-08-27 17:00,2012-11-03 10:00,2012-11-03 10:00,,PT_Normal,,,,,sZwBeJ+VP02obIsFJ2w9sw,,,,N,0,0,,,2013-11-05 11:09,2013-11-05 11:09,admin,admin,
412,102129,4512,26198,6590,0,N,N,N,CP_Drtn,TT_Task,DT_FixedDUR2,TK_NotStart,JF721.127,"Erect & Fix Stairs, Handrails & Platforms on Shell",6942,432,0,32,0,250,250,32,70,0,70,,,,2013-03-31 11:00,2013-04-03 13:00,,2013-02-12 14:00,2013-02-16 11:00,2013-02-12 14:00,2013-02-16 11:00,2013-02-12 14:00,2013-02-16 11:00,2013-03-31 11:00,2013-04-03 13:00,,PT_Normal,,,,,YS9BKBVSp0WfK78DcbkSng,,,,N,0,0,,,2013-11-05 11:09,2013-11-05 11:09,admin,admin,
413,102130,4512,26198,6590,0,N,N,N,CP_Drtn,TT_Task,DT_FixedDUR2,TK_NotStart,JF721.128,Erect & Fix Roof Platforms & Handrails,6942,432,0,40,0,420,420,40,140,0,140,,,,2013-03-31 11:00,2013-04-04 11:00,,2013-02-12 14:00,2013-02-17 09:00,2013-02-12 14:00,2013-02-17 09:00,2013-02-12 14:00,2013-02-17 09:00,2013-03-31 11:00,2013-04-04 11:00,,PT_Normal,,,,,HVpbLDERK0Wi7nlFjLMKOw,,,,N,0,0,,,2013-11-05 11:09,2013-11-05 11:09,admin,admin,
414,102131,4512,26158,6590,0,N,N,N,CP_Drtn,TT_Task,DT_FixedDUR2,TK_NotStart,JF721.78,Erect & Weld Annular Plates,6942,432,0,120,0,1190,1190,120,350,0,350,,,,2012-11-03 10:00,2012-11-15 15:00,,2012-09-16 08:00,2012-09-29 08:00,2012-09-16 08:00,2012-09-29 08:00,2012-09-16 08:00,2012-09-29 08:00,2012-11-03 10:00,2012-11-15 15:00,,PT_Normal,,,,,SgpGjEbPd0iwwVaQ4AX4MA,,,,N,0,0,,,2013-11-05 11:09,2013-11-05 11:09,admin,admin,
415,102132,4512,26158,6590,0,N,N,N,CP_Drtn,TT_Task,DT_FixedDUR2,TK_NotStart,JF721.79,Erect & Tack Bottom Plates,6951,432,0,160,0,960,960,160,420,0,420,,,,2012-11-15 15:00,2012-12-03 10:00,,2012-09-29 08:00,2012-10-16 08:00,2012-09-29 08:00,2012-10-16 08:00,2012-09-29 08:00,2012-10-16 08:00,2012-11-15 15:00,2012-12-03 10:00,,PT_Normal,,,,,S5hXFLDyg0eynjKZMPDs4w,,,,N,0,0,,,2013-11-05 11:09,2013-11-05 11:09,admin,admin,
416,102133,4512,26158,6590,0,N,N,N,CP_Drtn,TT_Task,DT_FixedDUR2,TK_NotStart,JF721.80,Welding of Bottom Plates,6968,432,0,200,0,1050,1050,200,350,0,350,,,,2012-12-03 10:00,2012-12-24 15:00,,2012-10-16 08:00,2012-11-08 08:00,2012-10-16 08:00,2012-11-08 08:00,2012-10-16 08:00,2012-11-08 08:00,2012-12-03 10:00,2012-12-24 15:00,,PT_Normal,,,,,KZPrUtzx/UW98pB6gjDo4w,,,,N,0,0,,,2013-11-05 11:09,2013-11-05 11:09,admin,admin,
417,102134,4512,26158,6590,0,N,N,N,CP_Drtn,TT_Task,DT_FixedDUR2,TK_NotStart,JF721.81,Visual Inspection & Cleaning,6935,432,0,16,0,110,110,16,40,0,40,,,,2012-12-24 15:00,2012-12-26 11:00,,2012-11-08 08:00,2012-11-10 09:00,2012-11-08 08:00,2012-11-10 09:00,2012-11-08 08:00,2012-11-10 09:00,2012-12-24 15:00,2012-12-26 11:00,,PT_Normal,,,,,i2Zk+zSr8U6Us08Iuz216Q,,,,N,0,0,,,2013-11-05 11:09,2013-11-05 11:09,admin,admin,
418,102135,4512,26158,6590,0,N,N,N,CP_Drtn,TT_Task,DT_FixedDUR2,TK_NotStart,JF721.82,Carry Out NDT & Vaccuum Box Test,6935,432,0,24,0,240,240,24,80,0,80,,,,2012-12-26 11:00,2012-12-29 10:00,,2012-11-10 09:00,2012-11-12 13:00,2012-11-10 09:00,2012-11-12 13:00,2012-11-10 09:00,2012-11-12 13:00,2012-12-26 11:00,2012-12-29 10:00,,PT_Normal,,,,,R2q9//7+pkqUgGquhwLFLA,,,,N,0,0,,,2013-11-05 11:09,2013-11-05 11:09,admin,admin,
419,102136,4512,26159,6590,0,N,N,N,CP_Drtn,TT_Task,DT_FixedDUR2,TK_NotStart,JF721.118,MArk & Cut Holes,6964,432,0,40,0,180,180,40,60,0,60,,,,2013-02-21 09:00,2013-02-25 14:00,,2013-01-06 15:00,2013-01-10 15:00,2013-01-06 15:00,2013-01-10 15:00,2013-01-06 15:00,2013-01-10 15:00,2013-02-21 09:00,2013-02-25 14:00,,PT_Normal,,,,,92di5OW+MkWaDL9TlyzvlA,,,,N,0,0,,,2013-11-05 11:09,2013-11-05 11:09,admin,admin,
420,102137,4512,26159,6590,0,N,N,N,CP_Drtn,TT_Task,DT_FixedDUR2,TK_NotStart,JF721.119,"Fit & Tack Manholes ,Nozzles on Shell",6958,432,0,40,0,220,220,40,80,0,80,,,,2013-02-22 09:30,2013-02-26 12:00,,2013-01-07 13:00,2013-01-12 08:00,2013-01-07 13:00,2013-01-12 08:00,2013-01-07 13:00,2013-01-12 08:00,2013-02-22 09:30,2013-02-26 12:00,,PT_Normal,,,,,34KfcyqsxECXpMNEfeSlOQ,,,,N,0,0,,,2013-11-05 11:09,2013-11-05 11:09,admin,admin,
421,102138,4512,26159,6590,0,N,N,N,CP_Drtn,TT_Task,DT_FixedDUR2,TK_NotStart,JF721.120,Weld MAnholes & Nozzles on shell,6968,432,0,40,0,260,260,40,170,0,170,,,,2013-02-23 10:00,2013-02-27 10:00,,2013-01-08 11:00,2013-01-12 16:00,2013-01-08 11:00,2013-01-12 16:00,2013-01-08 11:00,2013-01-12 16:00,2013-02-23 10:00,2013-02-27 10:00,,PT_Normal,,,,,MhX/z4cRoUaCltTqFB49EA,,,,N,0,0,,,2013-11-05 11:09,2013-11-05 11:09,admin,admin,
422,102139,4512,26159,6590,0,N,N,N,CP_Drtn,TT_Task,DT_FixedDUR2,TK_NotStart,JF721.121,NDT on Manholes & Nozzles on shell,6965,432,0,32,0,100,100,32,20,0,20,,,,2013-02-27 10:00,2013-03-02 17:00,,2013-01-12 16:00,2013-01-16 08:00,2013-01-12 16:00,2013-01-16 08:00,2013-01-12 16:00,2013-01-16 08:00,2013-02-27 10:00,2013-03-02 17:00,,PT_Normal,,,,,Y9UifEiBtU6IoTcMFLE2eQ,,,,N,0,0,,,2013-11-05 11:09,2013-11-05 11:09,admin,admin,
423,102140,4512,26160,6590,0,N,N,N,CP_Drtn,TT_Task,DT_FixedDUR2,TK_NotStart,JF721.122,Prepare Tank for Roof Contruction,6914,432,0,40,0,260,260,40,60,0,60,,,,2013-02-27 10:00,2013-03-03 15:00,,2013-01-12 16:00,2013-01-16 16:00,2013-01-12 16:00,2013-01-16 16:00,2013-01-12 16:00,2013-01-16 16:00,2013-02-27 10:00,2013-03-03 15:00,,PT_Normal,,,,,zisPnG/VNEuu3VHWmApU7A,,,,N,0,0,,,2013-11-05 11:09,2013-11-05 11:09,admin,admin,
424,102141,4512,26160,6590,0,N,N,N,CP_Drtn,TT_Task,DT_FixedDUR2,TK_NotStart,JF721.123,Install Shoe Support Structure on Shell,6964,432,0,48,0,580,580,48,120,0,120,,,,2013-03-03 15:00,2013-03-09 08:00,,2013-01-16 16:00,2013-01-22 09:00,2013-01-16 16:00,2013-01-22 09:00,2013-01-16 16:00,2013-01-22 09:00,2013-03-03 15:00,2013-03-09 08:00,,PT_Normal,,,,,rkn4XFNDzUOD8QaW34nxwA,,,,N,0,0,,,2013-11-05 11:09,2013-11-05 11:09,admin,admin,
425,102142,4512,26160,6590,0,N,N,N,CP_Drtn,TT_Task,DT_FixedDUR2,TK_NotStart,JF721.124,Install / Assemble Roof Rafters,6951,432,0,104,0,1500,1500,104,300,0,300,,,,2013-03-09 08:00,2013-03-19 17:00,,2013-01-22 09:00,2013-02-01 12:30,2013-01-22 09:00,2013-02-01 12:30,2013-01-22 09:00,2013-02-01 12:30,2013-03-09 08:00,2013-03-19 17:00,,PT_Normal,,,,,b2owWjMjGkOBDfmxyanmpA,,,,N,0,0,,,2013-11-05 11:09,2013-11-05 11:09,admin,admin,
426,102143,4512,26160,6590,0,N,N,N,CP_Drtn,TT_Task,DT_FixedDUR2,TK_NotStart,JF721.125,Installation of Roof Plates,6914,432,0,72,0,900,900,72,180,0,180,,,,2013-03-20 07:00,2013-03-27 14:00,,2013-02-01 12:30,2013-02-09 12:00,2013-02-01 12:30,2013-02-09 12:00,2013-02-01 12:30,2013-02-09 12:00,2013-03-20 07:00,2013-03-27 14:00,,PT_Normal,,,,,EdYYm31M4UWpZVifvZWhyg,,,,N,0,0,,,2013-11-05 11:09,2013-11-05 11:09,admin,admin,
427,102144,4512,26160,6590,0,N,N,N,CP_Drtn,TT_Task,DT_FixedDUR2,TK_NotStart,JF721.126,Install Roof Manholes & Nozzles,6964,432,0,32,0,160,160,32,30,0,30,,,,2013-03-27 14:00,2013-03-31 11:00,,2013-02-09 12:00,2013-02-12 14:00,2013-02-09 12:00,2013-02-12 14:00,2013-02-09 12:00,2013-02-12 14:00,2013-03-27 14:00,2013-03-31 11:00,,PT_Normal,,,,,d6fQWmfjVUKjpMbGlewaFg,,,,N,0,0,,,2013-11-05 11:09,2013-11-05 11:09,admin,admin,
428,102145,4512,26161,6590,0,N,N,N,CP_Drtn,TT_Task,DT_FixedDUR2,TK_NotStart,JF721.150,Concrete testing,6916,432,0,32,0,210,210,32,60,0,60,,,,2013-07-25 11:00,2013-07-29 08:00,,2013-06-09 09:00,2013-06-12 11:00,2013-06-09 09:00,2013-06-12 11:00,2013-06-09 09:00,2013-06-12 11:00,2013-07-25 11:00,2013-07-29 08:00,,PT_Normal,,,,,OOmlREt7pkuEOXioWj8PEA,,,,N,0,0,,,2013-11-05 11:09,2013-11-05 11:09,admin,admin,
429,102146,4512,26161,6590,0,N,N,N,CP_Drtn,TT_Task,DT_FixedDUR2,TK_NotStart,JF721.151,RT testing for the welding,6942,432,0,40,0,240,240,40,80,0,80,,,,2013-07-29 08:00,2013-08-02 10:30,,2013-06-12 11:00,2013-06-16 16:00,2013-06-12 11:00,2013-06-16 16:00,2013-06-12 11:00,2013-06-16 16:00,2013-07-29 08:00,2013-08-02 10:30,,PT_Normal,,,,,7S8F9a9kTUi5/I0pP3Xn1g,,,,N,0,0,,,2013-11-05 11:09,2013-11-05 11:09,admin,admin,
430,102147,4512,26161,6590,0,N,N,N,CP_Drtn,TT_Task,DT_FixedDUR2,TK_NotStart,JF721.152,Sand testing,6915,432,0,40,0,240,240,40,80,0,80,,,,2013-08-02 10:30,2013-08-06 13:00,,2013-06-16 16:00,2013-06-20 16:00,2013-06-16 16:00,2013-06-20 16:00,2013-06-16 16:00,2013-06-20 16:00,2013-08-02 10:30,2013-08-06 13:00,,PT_Normal,,,,,YA+IDxWuNESVw2gECsv8ig,,,,N,0,0,,,2013-11-05 11:09,2013-11-05 11:09,admin,admin,
431,102148,4512,26161,6590,0,N,N,N,CP_Drtn,TT_Task,DT_FixedDUR2,TK_NotStart,JF721.153,Tank Calibration,6965,432,0,24,0,140,140,24,40,0,40,,,,2013-08-06 13:00,2013-08-08 17:00,,2013-06-20 16:00,2013-06-23 15:00,2013-06-20 16:00,2013-06-23 15:00,2013-06-20 16:00,2013-06-23 15:00,2013-08-06 13:00,2013-08-08 17:00,,PT_Normal,,,,,mfvTijMiOkK0B8xgwGqRZw,,,,N,0,0,,,2013-11-05 11:09,2013-11-05 11:09,admin,admin,
432,102149,4512,26162,6590,0,N,N,N,CP_Drtn,TT_Task,DT_FixedDUR2,TK_NotStart,JF721.129,Install Blind Flanges,6965,432,0,32,0,180,180,32,50,0,50,,,,2013-04-04 11:00,2013-04-08 08:00,,2013-02-17 09:00,2013-02-20 11:00,2013-02-17 09:00,2013-02-20 11:00,2013-02-17 09:00,2013-02-20 11:00,2013-04-04 11:00,2013-04-08 08:00,,PT_Normal,,,,,CW41eMV03kqp5Zfy3ScNEQ,,,,N,0,0,,,2013-11-05 11:09,2013-11-05 11:09,admin,admin,
433,102150,4512,26162,6590,0,N,N,N,CP_Drtn,TT_Task,DT_FixedDUR2,TK_NotStart,JF721.130,Tank Water Filling,6965,432,0,232,0,1820,1820,232,780,0,780,,,,2013-04-08 08:00,2013-05-02 15:00,,2013-02-20 11:00,2013-03-17 13:00,2013-02-20 11:00,2013-03-17 13:00,2013-02-20 11:00,2013-03-17 13:00,2013-04-08 08:00,2013-05-02 15:00,,PT_Normal,,,,,YEsfHLOWVkazLTAhVHlrGg,,,,N,0,0,,,2013-11-05 11:09,2013-11-05 11:09,admin,admin,
434,102151,4512,26162,6590,0,N,N,N,CP_Drtn,TT_Task,DT_FixedDUR2,TK_NotStart,JF721.131,Hold Water for 48 Hours,6965,432,0,40,0,120,120,40,40,0,40,,,,2013-05-02 15:00,2013-05-07 10:00,,2013-03-17 13:00,2013-03-21 13:00,2013-03-17 13:00,2013-03-21 13:00,2013-03-17 13:00,2013-03-21 13:00,2013-05-02 15:00,2013-05-07 10:00,,PT_Normal,,,,,H0UdMVXjc0ezD50cbQw+IA,,,,N,0,0,,,2013-11-05 11:09,2013-11-05 11:09,admin,admin,
435,102152,4512,26162,6590,0,N,N,N,CP_Drtn,TT_Task,DT_FixedDUR2,TK_NotStart,JF721.132,Drain Water from Tank,6965,432,0,112,0,1560,1560,112,260,0,260,,,,2013-05-07 10:00,2013-05-19 12:00,,2013-03-21 13:00,2013-04-02 15:00,2013-03-21 13:00,2013-04-02 15:00,2013-03-21 13:00,2013-04-02 15:00,2013-05-07 10:00,2013-05-19 12:00,,PT_Normal,,,,,SV6UG59+XUexU4r52G7wPg,,,,N,0,0,,,2013-11-05 11:09,2013-11-05 11:09,admin,admin,
436,102153,4512,26162,6590,0,N,N,N,CP_Drtn,TT_Task,DT_FixedDUR2,TK_NotStart,JF721.133,Clean & Dry Out Tank,6942,432,0,24,0,280,280,24,40,0,40,,,,2013-05-19 12:00,2013-05-21 16:00,,2013-04-02 15:00,2013-04-05 11:30,2013-04-02 15:00,2013-04-05 11:30,2013-04-02 15:00,2013-04-05 11:30,2013-05-19 12:00,2013-05-21 16:00,,PT_Normal,,,,,Ga++CDqbqEmV5xpAKZ7Flw,,,,N,0,0,,,2013-11-05 11:09,2013-11-05 11:09,admin,admin,
437,102154,4512,26163,6590,0,N,N,N,CP_Drtn,TT_Task,DT_FixedDUR2,TK_NotStart,JF721.116,Erect & Tack Curve Angle,6942,432,0,40,0,260,260,40,100,0,100,,,,2013-02-11 08:00,2013-02-15 10:30,,2012-12-27 09:00,2012-12-31 14:00,2012-12-27 09:00,2012-12-31 14:00,2012-12-27 09:00,2012-12-31 14:00,2013-02-11 08:00,2013-02-15 10:30,,PT_Normal,,,,,JrW0cdMw6USy5D5/lydT2g,,,,N,0,0,,,2013-11-05 11:09,2013-11-05 11:09,admin,admin,
438,102155,4512,26163,6590,0,N,N,N,CP_Drtn,TT_Task,DT_FixedDUR2,TK_NotStart,JF721.117,Weld Curve Angle,6942,432,0,56,0,560,560,56,280,0,280,,,,2013-02-15 10:30,2013-02-21 09:00,,2012-12-31 14:00,2013-01-06 15:00,2012-12-31 14:00,2013-01-06 15:00,2012-12-31 14:00,2013-01-06 15:00,2013-02-15 10:30,2013-02-21 09:00,,PT_Normal,,,,,nzEyVK+fyEO4oG42+YDQWA,,,,N,0,0,,,2013-11-05 11:09,2013-11-05 11:09,admin,admin,
439,102156,4512,26164,6590,0,N,N,N,CP_Drtn,TT_Task,DT_FixedDUR2,TK_NotStart,JF721.139,Erect Scafolding Inside Tank,6942,432,0,56,0,1040,1040,56,120,0,120,,,,2013-05-21 16:00,2013-05-27 17:00,,2013-04-05 11:30,2013-04-11 10:00,2013-04-05 11:30,2013-04-11 10:00,2013-04-05 11:30,2013-04-11 10:00,2013-05-21 16:00,2013-05-27 17:00,,PT_Normal,,,,,uM8yyX/SMkSMbP6E3fAg2Q,,,,N,0,0,,,2013-11-05 11:09,2013-11-05 11:09,admin,admin,
440,102157,4512,26164,6590,0,N,N,N,CP_Drtn,TT_Task,DT_FixedDUR2,TK_NotStart,JF721.140,Internal Shell Blast & Prime,6949,432,0,32,0,480,480,32,60,0,60,,,,2013-05-24 12:30,2013-05-27 17:00,,2013-04-08 08:00,2013-04-11 10:00,2013-04-08 08:00,2013-04-11 10:00,2013-04-08 08:00,2013-04-11 10:00,2013-05-24 12:30,2013-05-27 17:00,,PT_Normal,,,,,+6Fyuzg6D0OWb5+HpoBIFQ,,,,N,0,0,,,2013-11-05 11:09,2013-11-05 11:09,admin,admin,
441,102158,4512,26164,6590,0,N,N,N,CP_Drtn,TT_Task,DT_FixedDUR2,TK_NotStart,JF721.141,Internal Shell Secondary & Final Coat,6950,432,0,32,0,510,510,32,60,0,60,,,,2013-05-28 07:00,2013-05-31 11:30,,2013-04-11 10:00,2013-04-14 17:00,2013-04-11 10:00,2013-04-14 17:00,2013-04-11 10:00,2013-04-14 17:00,2013-05-28 07:00,2013-05-31 11:30,,PT_Normal,,,,,BaO0miGh4EWCm1BGdUh1cg,,,,N,0,0,,,2013-11-05 11:09,2013-11-05 11:09,admin,admin,
442,102159,4512,26164,6590,0,N,N,N,CP_Drtn,TT_Task,DT_FixedDUR2,TK_NotStart,JF721.142,Internal Shell Paint Inspection,6965,432,0,16,0,180,180,16,20,0,20,,,,2013-05-28 07:00,2013-05-29 13:00,,2013-04-11 10:00,2013-04-13 11:00,2013-04-11 10:00,2013-04-13 11:00,2013-04-11 10:00,2013-04-13 11:00,2013-05-28 07:00,2013-05-29 13:00,,PT_Normal,,,,,/zuc8L7pbUij8mYdr5stPg,,,,N,0,0,,,2013-11-05 11:09,2013-11-05 11:09,admin,admin,
443,102160,4512,26164,6590,0,N,N,N,CP_Drtn,TT_Task,DT_FixedDUR2,TK_NotStart,JF721.143,Dismantle Internal Scaffolding,6942,432,0,32,0,640,640,32,80,0,80,,,,2013-05-29 13:00,2013-06-02 10:00,,2013-04-13 11:00,2013-04-16 13:00,2013-04-13 11:00,2013-04-16 13:00,2013-04-13 11:00,2013-04-16 13:00,2013-05-29 13:00,2013-06-02 10:00,,PT_Normal,,,,,96UPj4iK50GDU8R6zfmPRg,,,,N,0,0,,,2013-11-05 11:09,2013-11-05 11:09,admin,admin,
444,102161,4512,26164,6590,0,N,N,N,CP_Drtn,TT_Task,DT_FixedDUR2,TK_NotStart,JF721.144,Bottom/Annular Plate Blast & Prime,6949,432,0,24,0,260,260,24,40,0,40,,,,2013-06-02 10:00,2013-06-04 14:00,,2013-04-16 13:00,2013-04-18 17:00,2013-04-16 13:00,2013-04-18 17:00,2013-04-16 13:00,2013-04-18 17:00,2013-06-02 10:00,2013-06-04 14:00,,PT_Normal,,,,,T1RXX/btaUOMcuwbNaTGGg,,,,N,0,0,,,2013-11-05 11:09,2013-11-05 11:09,admin,admin,
445,102162,4512,26164,6590,0,N,N,N,CP_Drtn,TT_Task,DT_FixedDUR2,TK_NotStart,JF721.145,Bottom/Annular Plate Secondary & Final Coat,6950,432,0,24,0,200,200,24,40,0,40,,,,2013-06-04 14:00,2013-06-07 10:30,,2013-04-19 09:30,2013-04-21 16:00,2013-04-19 09:30,2013-04-21 16:00,2013-04-19 09:30,2013-04-21 16:00,2013-06-04 14:00,2013-06-07 10:30,,PT_Normal,,,,,csQooSpdeEWWlU6AQB4taw,,,,N,0,0,,,2013-11-05 11:09,2013-11-05 11:09,admin,admin,
446,102163,4512,26164,6590,0,N,N,N,CP_Drtn,TT_Task,DT_FixedDUR2,TK_NotStart,JF721.146,Bottom/Annular Plate Paint Inspection,6942,432,0,16,0,90,90,16,20,0,20,,,,2013-06-07 10:30,2013-06-09 09:00,,2013-04-21 16:00,2013-04-23 12:00,2013-04-21 16:00,2013-04-23 12:00,2013-04-21 16:00,2013-04-23 12:00,2013-06-07 10:30,2013-06-09 09:00,,PT_Normal,,,,,9q5Oe9S9FUOyUrGQi2QTig,,,,N,0,0,,,2013-11-05 11:09,2013-11-05 11:09,admin,admin,
447,102164,4512,26165,6590,0,N,N,N,CP_Drtn,TT_Task,DT_FixedDUR2,TK_NotStart,JF721.147,Tanks lighting,6942,432,0,24,0,200,200,24,40,0,40,,,,2013-07-17 14:00,2013-07-20 13:00,,2013-06-01 12:00,2013-06-03 16:00,2013-06-01 12:00,2013-06-03 16:00,2013-06-01 12:00,2013-06-03 16:00,2013-07-17 14:00,2013-07-20 13:00,,PT_Normal,,,,,rgHUNbKLpkKGJBElS4exdw,,,,N,0,0,,,2013-11-05 11:09,2013-11-05 11:09,admin,admin,
448,102165,4512,26165,6590,0,N,N,N,CP_Drtn,TT_Task,DT_FixedDUR2,TK_NotStart,JF721.148,Tanks lighting  protection,6942,432,0,24,0,200,200,24,40,0,40,,,,2013-07-20 13:00,2013-07-22 17:00,,2013-06-03 16:00,2013-06-06 10:00,2013-06-03 16:00,2013-06-06 10:00,2013-06-03 16:00,2013-06-06 10:00,2013-07-20 13:00,2013-07-22 17:00,,PT_Normal,,,,,d00A8ZO/TE+acJSf/cHqAw,,,,N,0,0,,,2013-11-05 11:09,2013-11-05 11:09,admin,admin,
449,102166,4512,26165,6590,0,N,N,N,CP_Drtn,TT_Task,DT_FixedDUR2,TK_NotStart,JF721.149,Grounding system,6942,432,0,24,0,160,160,24,40,0,40,,,,2013-07-23 07:00,2013-07-25 11:00,,2013-06-06 10:00,2013-06-09 09:00,2013-06-06 10:00,2013-06-09 09:00,2013-06-06 10:00,2013-06-09 09:00,2013-07-23 07:00,2013-07-25 11:00,,PT_Normal,,,,,jkj2n08UgEes1+vPFso9/w,,,,N,0,0,,,2013-11-05 11:09,2013-11-05 11:09,admin,admin,
450,102167,4512,26166,6590,0,N,N,N,CP_Drtn,TT_Task,DT_FixedDUR2,TK_NotStart,JF721.83,Prepare Shell Course # 1 for Erection,6951,432,0,32,0,140,140,32,40,0,40,,,,2012-12-29 10:00,2013-01-01 12:00,,2012-11-12 13:00,2012-11-15 15:00,2012-11-12 13:00,2012-11-15 15:00,2012-11-12 13:00,2012-11-15 15:00,2012-12-29 10:00,2013-01-01 12:00,,PT_Normal,,,,,nPqvAxCgaE2i2AzVHB58Mg,,,,N,0,0,,,2013-11-05 11:09,2013-11-05 11:09,admin,admin,
451,102168,4512,26166,6590,0,N,N,N,CP_Drtn,TT_Task,DT_FixedDUR2,TK_NotStart,JF721.84,Erect & Tack Shell Course # 1,6951,432,0,40,0,320,320,40,140,0,140,,,,2013-01-01 12:00,2013-01-05 17:00,,2012-11-15 15:00,2012-11-20 10:00,2012-11-15 15:00,2012-11-20 10:00,2012-11-15 15:00,2012-11-20 10:00,2013-01-01 12:00,2013-01-05 17:00,,PT_Normal,,,,,IiGs7fTN+UCTLH4/AHzcVg,,,,N,0,0,,,2013-11-05 11:09,2013-11-05 11:09,admin,admin,
452,102169,4512,26166,6590,0,N,N,N,CP_Drtn,TT_Task,DT_FixedDUR2,TK_NotStart,JF721.85,Weld Outer Vertical Seam,6942,432,0,40,0,400,400,40,200,0,200,,,,2013-01-02 10:00,2013-01-06 15:00,,2012-11-17 08:00,2012-11-21 08:00,2012-11-17 08:00,2012-11-21 08:00,2012-11-17 08:00,2012-11-21 08:00,2013-01-02 10:00,2013-01-06 15:00,,PT_Normal,,,,,rdNusc8hpUCtXFcD3vENGA,,,,N,0,0,,,2013-11-05 11:09,2013-11-05 11:09,admin,admin,
453,102170,4512,26166,6590,0,N,N,N,CP_Drtn,TT_Task,DT_FixedDUR2,TK_NotStart,JF721.86,Backgouge & NDT Inside Vertical Seam,6965,432,0,40,0,360,360,40,200,0,200,,,,2013-01-03 08:00,2013-01-07 13:00,,2012-11-17 16:00,2012-11-21 16:00,2012-11-17 16:00,2012-11-21 16:00,2012-11-17 16:00,2012-11-21 16:00,2013-01-03 08:00,2013-01-07 13:00,,PT_Normal,,,,,a+LRbPDOq0aLUgY4lDrumg,,,,N,0,0,,,2013-11-05 11:09,2013-11-05 11:09,admin,admin,
454,102171,4512,26166,6590,0,N,N,N,CP_Drtn,TT_Task,DT_FixedDUR2,TK_NotStart,JF721.87,Weld Inside Vertical Seam,6968,432,0,40,0,380,380,40,200,0,200,,,,2013-01-03 16:00,2013-01-08 11:00,,2012-11-18 14:00,2012-11-22 14:00,2012-11-18 14:00,2012-11-22 14:00,2012-11-18 14:00,2012-11-22 14:00,2013-01-03 16:00,2013-01-08 11:00,,PT_Normal,,,,,HsFDzAaZ0kuM1kFpRIEe9w,,,,N,0,0,,,2013-11-05 11:09,2013-11-05 11:09,admin,admin,
455,102172,4512,26167,6590,0,N,N,N,CP_Drtn,TT_Task,DT_FixedDUR2,TK_NotStart,JF721.67,Rental For Workers & Engineers Accomodation with Facilities,6915,560,0,40,0,40,40,40,40,0,40,,,,2012-09-05 12:00,2012-09-09 17:00,,2012-07-04 07:00,2012-07-08 12:00,2012-07-04 07:00,2012-07-08 12:00,2012-07-04 07:00,2012-07-08 12:00,2012-09-05 12:00,2012-09-09 17:00,,PT_Normal,,,,,l6sO15dbAEKO0votvDwuDA,,,,N,0,0,,,2013-11-05 11:09,2013-11-05 11:09,admin,admin,
456,102173,4512,26167,6590,0,N,N,N,CP_Drtn,TT_Task,DT_FixedDUR2,TK_NotStart,JF721.69,Ma'aden Inspection & Approval for Portacabins,6915,560,0,16,0,80,80,16,30,0,30,,,,2012-09-27 07:00,2012-09-29 08:00,,2012-07-25 12:00,2012-07-27 10:30,2012-07-25 12:00,2012-07-27 10:30,2012-07-25 12:00,2012-07-27 10:30,2012-09-27 07:00,2012-09-29 08:00,,PT_Normal,,,,,bnGaJWN3mkSlZgKz4TGyFw,,,,N,0,0,,,2013-11-05 11:09,2013-11-05 11:09,admin,admin,
457,102174,4512,26167,6590,0,N,N,N,CP_Drtn,TT_Task,DT_FixedDUR2,TK_NotStart,JF721.68,Complete Mobilize AZ Equipment to Site & Prepare the site fabrication yard,6965,560,0,200,0,2160,2160,200,960,0,960,,,,2012-09-05 12:00,2012-09-26 17:00,,2012-07-04 07:00,2012-07-25 12:00,2012-07-04 07:00,2012-07-25 12:00,2012-07-04 07:00,2012-07-25 12:00,2012-09-05 12:00,2012-09-26 17:00,,PT_Normal,,,,,g8fk0Vpgvkmb7iTtpEzULw,,,,N,0,0,,,2013-11-05 11:09,2013-11-05 11:09,admin,admin,
458,102175,4512,26168,6590,0,N,N,N,CP_Drtn,TT_Task,DT_FixedDUR2,TK_NotStart,JF721.97,Prepare Shell Course # 3 for Erection,6942,432,0,32,0,140,140,32,30,0,30,,,,2013-01-15 10:00,2013-01-18 14:30,,2012-11-29 13:00,2012-12-03 10:00,2012-11-29 13:00,2012-12-03 10:00,2012-11-29 13:00,2012-12-03 10:00,2013-01-15 10:00,2013-01-18 14:30,,PT_Normal,,,,,b7Gu/ReNgUCB3F3OvWrO6A,aa2f8K/jKk+B4WqT5nBHdg,,,N,0,0,,,2013-11-05 11:09,2013-11-05 11:09,admin,admin,
459,102176,4512,26168,6590,0,N,N,N,CP_Drtn,TT_Task,DT_FixedDUR2,TK_NotStart,JF721.98,Erect & Tack Shell Course # 3,6951,432,0,40,0,300,300,40,100,0,100,,,,2013-01-19 07:00,2013-01-22 17:00,,2012-12-03 10:00,2012-12-07 12:30,2012-12-03 10:00,2012-12-07 12:30,2012-12-03 10:00,2012-12-07 12:30,2013-01-19 07:00,2013-01-22 17:00,,PT_Normal,,,,,TbwzoeoMpUeAe8Z/8Mxzyw,kdyi/RTY7E2TnBhVkMDvOA,,,N,0,0,,,2013-11-05 11:09,2013-11-05 11:09,admin,admin,
460,102177,4512,26168,6590,0,N,N,N,CP_Drtn,TT_Task,DT_FixedDUR2,TK_NotStart,JF721.99,Weld Outer Vertical Seam,6965,432,0,48,0,570,570,48,330,0,330,,,,2013-01-19 15:00,2013-01-24 13:00,,2012-12-04 08:00,2012-12-09 11:00,2012-12-04 08:00,2012-12-09 11:00,2012-12-04 08:00,2012-12-09 11:00,2013-01-19 15:00,2013-01-24 13:00,,PT_Normal,,,,,eg4tTdP1Rk+p0geTkHOpkg,86Bvz8VvCUucVvkCnUtGgg,,,N,0,0,,,2013-11-05 11:09,2013-11-05 11:09,admin,admin,
461,102178,4512,26168,6590,0,N,N,N,CP_Drtn,TT_Task,DT_FixedDUR2,TK_NotStart,JF721.100,Backgouge & NDT Inside Vertical Seam,6942,432,0,40,0,200,200,40,40,0,40,,,,2013-01-20 13:00,2013-01-24 13:00,,2012-12-04 16:00,2012-12-09 11:00,2012-12-04 16:00,2012-12-09 11:00,2012-12-04 16:00,2012-12-09 11:00,2013-01-20 13:00,2013-01-24 13:00,,PT_Normal,,,,,Ck8Sct3uSUaZ2Ru9CiERsg,HGM1vwCLFEqi4E2FBKOOXQ,,,N,0,0,,,2013-11-05 11:09,2013-11-05 11:09,admin,admin,
462,102179,4512,26168,6590,0,N,N,N,CP_Drtn,TT_Task,DT_FixedDUR2,TK_NotStart,JF721.101,Weld Inside Vertical Seam,6942,432,0,40,0,380,380,40,220,0,220,,,,2013-01-21 11:00,2013-01-25 13:30,,2012-12-05 14:00,2012-12-10 09:00,2012-12-05 14:00,2012-12-10 09:00,2012-12-05 14:00,2012-12-10 09:00,2013-01-21 11:00,2013-01-25 13:30,,PT_Normal,,,,,rYP4Ne4lIEiXP1NOd4DsYQ,LHI8cryx3Uy+wfN0GANeXg,,,N,0,0,,,2013-11-05 11:09,2013-11-05 11:09,admin,admin,
463,102180,4512,26168,6590,0,N,N,N,CP_Drtn,TT_Task,DT_FixedDUR2,TK_NotStart,JF721.102,"""""Fit & Tack Horizontal Seam between Shell Course # 2 & 3""""",6942,432,0,40,0,240,240,40,80,0,80,,,,2013-01-22 09:00,2013-01-26 14:00,,2012-12-06 12:00,2012-12-10 17:00,2012-12-06 12:00,2012-12-10 17:00,2012-12-06 12:00,2012-12-10 17:00,2013-01-22 09:00,2013-01-26 14:00,,PT_Normal,,,,,k2+bL0NtpE+77Y8Di6pEgA,x/t6JEwh8EWnJncbLfweow,,,N,0,0,,,2013-11-05 11:09,2013-11-05 11:09,admin,admin,
464,102181,4512,26168,6590,0,N,N,N,CP_Drtn,TT_Task,DT_FixedDUR2,TK_NotStart,JF721.103,"""""Weld Outer Horizontal Seam between Shell Course # 2 & 3""""",6942,432,0,56,0,680,680,56,440,0,440,,,,2013-01-23 07:00,2013-01-28 10:00,,2012-12-07 12:30,2012-12-13 11:00,2012-12-07 12:30,2012-12-13 11:00,2012-12-07 12:30,2012-12-13 11:00,2013-01-23 07:00,2013-01-28 10:00,,PT_Normal,,,,,dSprnxUH/EqrlOMY1k71QQ,andCbcI3A0aC9hARQKwuqg,,,N,0,0,,,2013-11-05 11:09,2013-11-05 11:09,admin,admin,
465,102182,4512,26168,6590,0,N,N,N,CP_Drtn,TT_Task,DT_FixedDUR2,TK_NotStart,JF721.104,"""""Backgouge & NDT Inside Horizontal Seam between Shell Course# 2 & 3""""",6942,432,0,40,0,162,162,40,40,0,40,,,,2013-01-23 15:00,2013-01-27 19:00,,2012-12-08 13:00,2012-12-12 13:00,2012-12-08 13:00,2012-12-12 13:00,2012-12-08 13:00,2012-12-12 13:00,2013-01-23 15:00,2013-01-27 19:00,,PT_Normal,,,,,J0BlEO0MzU6mbmBA9gz3MA,SS/dxiHsYEqPCSm6VbYpYw,,,N,0,0,,,2013-11-05 11:09,2013-11-05 11:09,admin,admin,
466,102183,4512,26168,6590,0,N,N,N,CP_Drtn,TT_Task,DT_FixedDUR2,TK_NotStart,JF721.105,"Weld Inner Horizontal Seam between Shell Course # 2 & 3""""",6942,432,0,40,0,340,340,40,220,0,220,,,,2013-01-24 13:00,2013-01-28 10:00,,2012-12-09 11:00,2012-12-13 11:00,2012-12-09 11:00,2012-12-13 11:00,2012-12-09 11:00,2012-12-13 11:00,2013-01-24 13:00,2013-01-28 10:00,,PT_Normal,,,,,KoxsPwgUZ0ifIWqgvnsHBA,BogY/79i3k2MF+2YBtnl6Q,,,N,0,0,,,2013-11-05 11:09,2013-11-05 11:09,admin,admin,
467,102184,4512,26169,6590,0,N,N,N,CP_Drtn,TT_Task,DT_FixedDUR2,TK_NotStart,JF721.88,Prepare Shell Course # 2 for Erection,6951,432,0,32,0,200,200,32,20,0,20,,,,2013-01-06 07:00,2013-01-09 09:00,,2012-11-20 10:00,2012-11-23 14:30,2012-11-20 10:00,2012-11-23 14:30,2012-11-20 10:00,2012-11-23 14:30,2013-01-06 07:00,2013-01-09 09:00,,PT_Normal,,,,,jDMUoHkZwE+GqJZZDGwDAw,,,,N,0,0,,,2013-11-05 11:09,2013-11-05 11:09,admin,admin,
468,102185,4512,26169,6590,0,N,N,N,CP_Drtn,TT_Task,DT_FixedDUR2,TK_NotStart,JF721.89,Erect & Tack Shell Course # 2,6951,432,0,40,0,500,500,40,160,0,160,,,,2013-01-09 09:00,2013-01-13 14:00,,2012-11-24 07:00,2012-11-27 17:00,2012-11-24 07:00,2012-11-27 17:00,2012-11-24 07:00,2012-11-27 17:00,2013-01-09 09:00,2013-01-13 14:00,,PT_Normal,,,,,RYZ5irtojUeBZ2yC/co7ww,,,,N,0,0,,,2013-11-05 11:09,2013-11-05 11:09,admin,admin,
469,102186,4512,26169,6590,0,N,N,N,CP_Drtn,TT_Task,DT_FixedDUR2,TK_NotStart,JF721.90,Weld Outer Vertical Seam,,432,0,48,0,540,540,48,240,0,240,,,,2013-01-10 07:00,2013-01-15 10:00,,2012-11-24 15:00,2012-11-29 13:00,2012-11-24 15:00,2012-11-29 13:00,2012-11-24 15:00,2012-11-29 13:00,2013-01-10 07:00,2013-01-15 10:00,,PT_Normal,,,,,lAMGTeGtHE2RN2J/6Ue1uQ,,,,N,0,0,,,2013-11-05 11:09,2013-11-05 11:09,admin,admin,
470,102187,4512,26169,6590,0,N,N,N,CP_Drtn,TT_Task,DT_FixedDUR2,TK_NotStart,JF721.91,Backgouge & NDT Inside Vertical Seam,6967,432,0,40,0,240,240,40,20,0,20,,,,2013-01-10 15:00,2013-01-15 10:00,,2012-11-25 13:00,2012-11-29 13:00,2012-11-25 13:00,2012-11-29 13:00,2012-11-25 13:00,2012-11-29 13:00,2013-01-10 15:00,2013-01-15 10:00,,PT_Normal,,,,,QIBed9K9nUSZg1C3u/0iGQ,,,,N,0,0,,,2013-11-05 11:09,2013-11-05 11:09,admin,admin,
471,102188,4512,26169,6590,0,N,N,N,CP_Drtn,TT_Task,DT_FixedDUR2,TK_NotStart,JF721.92,Weld Inside Vertical Seam,6967,432,0,40,0,500,500,40,240,0,240,,,,2013-01-12 08:00,2013-01-16 08:00,,2012-11-26 11:00,2012-11-30 13:30,2012-11-26 11:00,2012-11-30 13:30,2012-11-26 11:00,2012-11-30 13:30,2013-01-12 08:00,2013-01-16 08:00,,PT_Normal,,,,,me/8Ulf0D0qCc7QuohDGyA,,,,N,0,0,,,2013-11-05 11:09,2013-11-05 11:09,admin,admin,
472,102189,4512,26169,6590,0,N,N,N,CP_Drtn,TT_Task,DT_FixedDUR2,TK_NotStart,JF721.93,"""""Fit & Tack Horizontal Seam between Shell Course # 1 & 2""""",6942,432,0,40,0,320,320,40,140,0,140,,,,2013-01-12 16:00,2013-01-16 16:00,,2012-11-27 09:00,2012-12-01 14:00,2012-11-27 09:00,2012-12-01 14:00,2012-11-27 09:00,2012-12-01 14:00,2013-01-12 16:00,2013-01-16 16:00,,PT_Normal,,,,,HhepJ4QMJUucgLI2ZY292w,,,,N,0,0,,,2013-11-05 11:09,2013-11-05 11:09,admin,admin,
473,102190,4512,26169,6590,0,N,N,N,CP_Drtn,TT_Task,DT_FixedDUR2,TK_NotStart,JF721.94,"""""Weld Outer Horizontal Seam between Shell Course # 1 & 2""""",6942,432,0,56,0,800,800,56,520,0,520,,,,2013-01-13 14:00,2013-01-19 15:00,,2012-11-28 07:00,2012-12-04 08:00,2012-11-28 07:00,2012-12-04 08:00,2012-11-28 07:00,2012-12-04 08:00,2013-01-13 14:00,2013-01-19 15:00,,PT_Normal,,,,,lkLFEMXTXUKPxflPQyXARw,,,,N,0,0,,,2013-11-05 11:09,2013-11-05 11:09,admin,admin,
474,102191,4512,26169,6590,0,N,N,N,CP_Drtn,TT_Task,DT_FixedDUR2,TK_NotStart,JF721.95,"""""Backgouge & NDT Inside Horizontal Seam between Shell Course# 1 & 2""""",6915,432,0,40,0,220,220,40,60,0,60,,,,2013-01-14 12:00,2013-01-18 14:30,,2012-11-28 15:00,2012-12-03 10:00,2012-11-28 15:00,2012-12-03 10:00,2012-11-28 15:00,2012-12-03 10:00,2013-01-14 12:00,2013-01-18 14:30,,PT_Normal,,,,,kH/lAM3AtkWhT4mfVd58nw,,,,N,0,0,,,2013-11-05 11:09,2013-11-05 11:09,admin,admin,
475,102192,4512,26169,6590,0,N,N,N,CP_Drtn,TT_Task,DT_FixedDUR2,TK_NotStart,JF721.96,"Weld Inner Horizontal Seam between Shell Course # 1 & 2""""",6915,432,0,40,0,380,380,40,240,0,240,,,,2013-01-15 10:00,2013-01-19 15:00,,2012-11-29 13:00,2012-12-04 08:00,2012-11-29 13:00,2012-12-04 08:00,2012-11-29 13:00,2012-12-04 08:00,2013-01-15 10:00,2013-01-19 15:00,,PT_Normal,,,,,9cF45kxRFk2EnJ8lJ65Rtw,,,,N,0,0,,,2013-11-05 11:09,2013-11-05 11:09,admin,admin,
476,102193,4512,26170,6590,0,N,N,N,CP_Drtn,TT_Task,DT_FixedDUR2,TK_NotStart,JF721.70,Layout/Stake-out,6942,560,0,24,0,320,320,24,60,0,60,,,,2012-09-29 08:00,2012-10-01 12:00,,2012-07-27 10:30,2012-07-29 17:00,2012-07-27 10:30,2012-07-29 17:00,2012-07-27 10:30,2012-07-29 17:00,2012-09-29 08:00,2012-10-01 12:00,,PT_Normal,,,,,4XSHoqoD9ESoScRKLAlM8Q,,,,N,0,0,,,2013-11-05 11:09,2013-11-05 11:09,admin,admin,
477,102194,4512,26170,6590,0,N,N,N,CP_Drtn,TT_Task,DT_FixedDUR2,TK_NotStart,JF721.71,Excavation,6942,560,0,88,0,1650,1650,88,500,0,500,,,,2012-09-29 16:00,2012-10-09 09:00,,2012-07-28 11:00,2012-08-06 14:00,2012-07-28 11:00,2012-08-06 14:00,2012-07-28 11:00,2012-08-06 14:00,2012-09-29 16:00,2012-10-09 09:00,,PT_Normal,,,,,lKkUR0uQnEiKrFlTeRyUoA,,,,N,0,0,,,2013-11-05 11:09,2013-11-05 11:09,admin,admin,
478,102195,4512,26170,6590,0,N,N,N,CP_Drtn,TT_Task,DT_FixedDUR2,TK_NotStart,JF721.72,SteelWorks/Formworks,6980,560,0,64,0,1330,1330,64,280,0,280,,,,2012-10-09 09:00,2012-10-16 08:00,,2012-08-06 14:00,2012-08-13 13:00,2012-08-06 14:00,2012-08-13 13:00,2012-08-06 14:00,2012-08-13 13:00,2012-10-09 09:00,2012-10-16 08:00,,PT_Normal,,,,,xVEDaMrwhUGxK9K6DqJ8vw,,,,N,0,0,,,2013-11-05 11:09,2013-11-05 11:09,admin,admin,
479,102196,4512,26170,6590,0,N,N,N,CP_Drtn,TT_Task,DT_FixedDUR2,TK_NotStart,JF721.73,Soil Compaction,6965,560,0,48,0,730,730,48,250,0,250,,,,2012-10-16 08:00,2012-10-21 11:00,,2012-08-13 13:00,2012-08-18 16:00,2012-08-13 13:00,2012-08-18 16:00,2012-08-13 13:00,2012-08-18 16:00,2012-10-16 08:00,2012-10-21 11:00,,PT_Normal,,,,,XoqhXM9kB025ZKqzKhW7mQ,,,,N,0,0,,,2013-11-05 11:09,2013-11-05 11:09,admin,admin,
480,102197,4512,26212,6590,0,N,N,N,CP_Drtn,TT_Task,DT_FixedDUR2,TK_NotStart,JF721.74,Concrete Pouring,6952,560,0,16,0,160,160,16,38,0,38,,,,2012-10-21 11:00,2012-10-22 17:00,,2012-08-18 16:00,2012-08-23 12:00,2012-08-18 16:00,2012-08-23 12:00,2012-08-18 16:00,2012-08-23 12:00,2012-10-21 11:00,2012-10-22 17:00,,PT_Normal,,,,,7aQgAMWzIkGV4V+8TZmv9A,,,,N,0,0,,,2013-11-05 11:09,2013-11-05 11:09,admin,admin,
481,102198,4512,26212,6590,0,N,N,N,CP_Drtn,TT_Task,DT_FixedDUR2,TK_NotStart,JF721.75,Concrete Curing,6965,560,0,24,0,330,330,24,80,0,80,,,,2012-10-23 07:00,2012-10-25 11:00,,2012-08-23 12:00,2012-08-26 11:00,2012-08-23 12:00,2012-08-26 11:00,2012-08-23 12:00,2012-08-26 11:00,2012-10-23 07:00,2012-10-25 11:00,,PT_Normal,,,,,Y5ajYhGXQUqBh9/ROZtpHg,,,,N,0,0,,,2013-11-05 11:09,2013-11-05 11:09,admin,admin,
482,102199,4512,26212,6590,0,N,N,N,CP_Drtn,TT_Task,DT_FixedDUR2,TK_NotStart,JF721.76,Removal of Formworks,6952,560,0,32,0,480,480,32,120,0,120,,,,2012-10-25 11:00,2012-10-30 13:00,,2012-08-26 11:00,2012-08-29 13:00,2012-08-26 11:00,2012-08-29 13:00,2012-08-26 11:00,2012-08-29 13:00,2012-10-25 11:00,2012-10-30 13:00,,PT_Normal,,,,,30icY7YsuUmdEXuFSsSufw,,,,N,0,0,,,2013-11-05 11:09,2013-11-05 11:09,admin,admin,
483,102200,4512,26212,6590,0,N,N,N,CP_Drtn,TT_Task,DT_FixedDUR2,TK_NotStart,JF721.77,Backfilling,6965,560,0,32,0,360,360,32,150,0,150,,,,2012-10-30 13:00,2012-11-03 10:00,,2012-08-29 13:00,2012-09-02 10:00,2012-08-29 13:00,2012-09-02 10:00,2012-08-29 13:00,2012-09-02 10:00,2012-10-30 13:00,2012-11-03 10:00,,PT_Normal,,,,,1GGEgtI5UU6JtSlQbbU6DQ,,,,N,0,0,,,2013-11-05 11:09,2013-11-05 11:09,admin,admin,
484,102201,4512,26172,6590,0,N,N,N,CP_Drtn,TT_Task,DT_FixedDUR2,TK_NotStart,JF721.106,Prepare Shell Course # 4 for Erection,6942,432,0,32,0,110,110,32,30,0,30,,,,2013-01-28 10:00,2013-01-31 12:00,,2012-12-13 11:00,2012-12-17 08:00,2012-12-13 11:00,2012-12-17 08:00,2012-12-13 11:00,2012-12-17 08:00,2013-01-28 10:00,2013-01-31 12:00,,PT_Normal,,,,,QVvYlZiGQkKf+LnrlYNMuA,aa2f8K/jKk+B4WqT5nBHdg,,,N,0,0,,,2013-11-05 11:09,2013-11-05 11:09,admin,admin,
485,102202,4512,26172,6590,0,N,N,N,CP_Drtn,TT_Task,DT_FixedDUR2,TK_NotStart,JF721.107,Erect & Tack Shell Course # 4,6965,432,0,40,0,260,260,40,120,0,120,,,,2013-01-31 12:00,2013-02-04 17:00,,2012-12-17 08:00,2012-12-21 10:30,2012-12-17 08:00,2012-12-21 10:30,2012-12-17 08:00,2012-12-21 10:30,2013-01-31 12:00,2013-02-04 17:00,,PT_Normal,,,,,kiN5/fC2pk6PVFQfM2XPZQ,kdyi/RTY7E2TnBhVkMDvOA,,,N,0,0,,,2013-11-05 11:09,2013-11-05 11:09,admin,admin,
486,102203,4512,26172,6590,0,N,N,N,CP_Drtn,TT_Task,DT_FixedDUR2,TK_NotStart,JF721.108,Weld Outer Vertical Seam,6942,432,0,48,0,480,480,48,330,0,330,,,,2013-02-01 12:30,2013-02-06 13:00,,2012-12-17 16:00,2012-12-23 09:00,2012-12-17 16:00,2012-12-23 09:00,2012-12-17 16:00,2012-12-23 09:00,2013-02-01 12:30,2013-02-06 13:00,,PT_Normal,,,,,KS2csovBPkSQ307lBrpW/Q,86Bvz8VvCUucVvkCnUtGgg,,,N,0,0,,,2013-11-05 11:09,2013-11-05 11:09,admin,admin,
487,102204,4512,26172,6590,0,N,N,N,CP_Drtn,TT_Task,DT_FixedDUR2,TK_NotStart,JF721.109,Backgouge & NDT Inside Vertical Seam,6942,432,0,40,0,160,160,40,40,0,40,,,,2013-02-02 13:00,2013-02-06 13:00,,2012-12-18 14:00,2012-12-23 09:00,2012-12-18 14:00,2012-12-23 09:00,2012-12-18 14:00,2012-12-23 09:00,2013-02-02 13:00,2013-02-06 13:00,,PT_Normal,,,,,0/rBeqN6Xkeg58VuUekxXg,HGM1vwCLFEqi4E2FBKOOXQ,,,N,0,0,,,2013-11-05 11:09,2013-11-05 11:09,admin,admin,
488,102205,4512,26172,6590,0,N,N,N,CP_Drtn,TT_Task,DT_FixedDUR2,TK_NotStart,JF721.110,Weld Inside Vertical Seam,6935,432,0,40,0,320,320,40,220,0,220,,,,2013-02-03 11:00,2013-02-07 11:00,,2012-12-19 12:00,2012-12-23 17:00,2012-12-19 12:00,2012-12-23 17:00,2012-12-19 12:00,2012-12-23 17:00,2013-02-03 11:00,2013-02-07 11:00,,PT_Normal,,,,,/fuNY9RTEkupg7BwuF3sJQ,LHI8cryx3Uy+wfN0GANeXg,,,N,0,0,,,2013-11-05 11:09,2013-11-05 11:09,admin,admin,
489,102206,4512,26172,6590,0,N,N,N,CP_Drtn,TT_Task,DT_FixedDUR2,TK_NotStart,JF721.111,"""""Fit & Tack Horizontal Seam between Shell Course # 3 & 4""""",6942,432,0,40,0,240,240,40,100,0,100,,,,2013-02-04 09:00,2013-02-08 11:30,,2012-12-20 10:00,2012-12-24 15:00,2012-12-20 10:00,2012-12-24 15:00,2012-12-20 10:00,2012-12-24 15:00,2013-02-04 09:00,2013-02-08 11:30,,PT_Normal,,,,,foHeN8jkuEqASISuxX0vdQ,x/t6JEwh8EWnJncbLfweow,,,N,0,0,,,2013-11-05 11:09,2013-11-05 11:09,admin,admin,
490,102207,4512,26172,6590,0,N,N,N,CP_Drtn,TT_Task,DT_FixedDUR2,TK_NotStart,JF721.112,Weld Outer Horizontal Seam between Shell Course # 3 & 4,6942,432,0,56,0,680,680,56,440,0,440,,,,2013-02-05 07:00,2013-02-11 08:00,,2012-12-21 10:30,2012-12-27 09:00,2012-12-21 10:30,2012-12-27 09:00,2012-12-21 10:30,2012-12-27 09:00,2013-02-05 07:00,2013-02-11 08:00,,PT_Normal,,,,,U2wdtbGtLk2OZnosdSWKGA,andCbcI3A0aC9hARQKwuqg,,,N,0,0,,,2013-11-05 11:09,2013-11-05 11:09,admin,admin,
491,102208,4512,26172,6590,0,N,N,N,CP_Drtn,TT_Task,DT_FixedDUR2,TK_NotStart,JF721.113,"""""Backgouge & NDT Inside Horizontal Seam between Shell Course# 3 & 4""""",6942,432,0,40,0,180,180,40,40,0,40,,,,2013-02-05 15:00,2013-02-10 10:00,,2012-12-22 11:00,2012-12-26 11:00,2012-12-22 11:00,2012-12-26 11:00,2012-12-22 11:00,2012-12-26 11:00,2013-02-05 15:00,2013-02-10 10:00,,PT_Normal,,,,,kB3aR4O9zkueuSLlaZ29TQ,SS/dxiHsYEqPCSm6VbYpYw,,,N,0,0,,,2013-11-05 11:09,2013-11-05 11:09,admin,admin,
492,102209,4512,26172,6590,0,N,N,N,CP_Drtn,TT_Task,DT_FixedDUR2,TK_NotStart,JF721.114,"Weld Inner Horizontal Seam between Shell Course # 3 & 4""""",6942,432,0,40,0,360,360,40,220,0,220,,,,2013-02-06 13:00,2013-02-11 08:00,,2012-12-23 09:00,2012-12-27 09:00,2012-12-23 09:00,2012-12-27 09:00,2012-12-23 09:00,2012-12-27 09:00,2013-02-06 13:00,2013-02-11 08:00,,PT_Normal,,,,,wNLYb2OVTkWOD4d5fJzPoQ,BogY/79i3k2MF+2YBtnl6Q,,,N,0,0,,,2013-11-05 11:09,2013-11-05 11:09,admin,admin,
493,102210,4512,26172,6590,0,N,N,N,CP_Drtn,TT_Task,DT_FixedDUR2,TK_NotStart,JF721.115,"Fit, Weld Shell Course # 1 Annular Plate & Oil Test",6964,624,192,72,0,1500,1500,72,660,0,660,,,,2013-01-28 10:00,2013-02-04 17:00,,2012-11-22 14:00,2012-11-30 13:30,2012-11-22 14:00,2012-11-30 13:30,2012-11-22 14:00,2012-11-30 13:30,2013-01-28 10:00,2013-02-04 17:00,,PT_Normal,,,,,INtgDIGJf0CP9ZKpnyYNsQ,,,,N,0,0,,,2013-11-05 11:09,2013-11-05 11:09,admin,admin,
494,102211,4512,26173,6590,0,N,N,N,CP_Drtn,TT_Task,DT_FixedDUR2,TK_NotStart,JF721.154,FInal Inspection & Hand over to client,6915,432,0,40,0,320,320,40,80,0,80,,,,2013-08-09 09:30,2013-08-13 12:00,,2013-06-23 15:00,2013-06-27 15:00,2013-06-23 15:00,2013-06-27 15:00,2013-06-23 15:00,2013-06-27 15:00,2013-08-09 09:30,2013-08-13 12:00,,PT_Normal,,,,,I4PX9iPU5EC3M0zmXnfU4A,,,,N,0,0,,,2013-11-05 11:09,2013-11-05 11:09,admin,admin,
495,102212,4512,26174,6590,0,N,N,N,CP_Drtn,TT_Task,DT_FixedDUR2,TK_NotStart,JF721.134,Erect  Scafolding Outside Tank,6942,432,0,72,0,1200,1200,72,160,0,160,,,,2013-05-07 10:00,2013-05-14 17:00,,2013-03-21 13:00,2013-03-29 12:30,2013-03-21 13:00,2013-03-29 12:30,2013-03-21 13:00,2013-03-29 12:30,2013-05-07 10:00,2013-05-14 17:00,,PT_Normal,,,,,zV9tCYAOvESR8xiwqbhyog,,,,N,0,0,,,2013-11-05 11:09,2013-11-05 11:09,admin,admin,
496,102213,4512,26174,6590,0,N,N,N,CP_Drtn,TT_Task,DT_FixedDUR2,TK_NotStart,JF721.135,External Shell Blast & Prime,6950,432,0,40,0,560,560,40,80,0,80,,,,2013-05-15 07:00,2013-05-19 12:00,,2013-03-29 12:30,2013-04-02 15:00,2013-03-29 12:30,2013-04-02 15:00,2013-03-29 12:30,2013-04-02 15:00,2013-05-15 07:00,2013-05-19 12:00,,PT_Normal,,,,,bn0yVAgg3ku5KItLZdJJmg,,,,N,0,0,,,2013-11-05 11:09,2013-11-05 11:09,admin,admin,
497,102214,4512,26174,6590,0,N,N,N,CP_Drtn,TT_Task,DT_FixedDUR2,TK_NotStart,JF721.136,External Shell Secondary & Final Coat,6965,432,0,40,0,560,560,40,80,0,80,,,,2013-05-15 15:00,2013-05-20 10:00,,2013-03-30 13:00,2013-04-03 13:00,2013-03-30 13:00,2013-04-03 13:00,2013-03-30 13:00,2013-04-03 13:00,2013-05-15 15:00,2013-05-20 10:00,,PT_Normal,,,,,Evusm+kl/UqdnCBeZG8Q4g,,,,N,0,0,,,2013-11-05 11:09,2013-11-05 11:09,admin,admin,
498,102215,4512,26174,6590,0,N,N,N,CP_Drtn,TT_Task,DT_FixedDUR2,TK_NotStart,JF721.137,External Shell Paint Inspection,6935,432,0,16,0,100,100,16,20,0,20,,,,2013-05-20 10:00,2013-05-21 16:00,,2013-04-03 13:00,2013-04-05 11:30,2013-04-03 13:00,2013-04-05 11:30,2013-04-03 13:00,2013-04-05 11:30,2013-05-20 10:00,2013-05-21 16:00,,PT_Normal,,,,,GcEM2d41hEe6+wE2DExE5w,,,,N,0,0,,,2013-11-05 11:09,2013-11-05 11:09,admin,admin,
499,102216,4512,26174,6590,0,N,N,N,CP_Drtn,TT_Task,DT_FixedDUR2,TK_NotStart,JF721.138,Dismantle External Scaffolding,6957,432,0,24,0,420,420,24,40,0,40,,,,2013-05-21 16:00,2013-05-24 12:30,,2013-04-05 11:30,2013-04-08 08:00,2013-04-05 11:30,2013-04-08 08:00,2013-04-05 11:30,2013-04-08 08:00,2013-05-21 16:00,2013-05-24 12:30,,PT_Normal,,,,,AsxgCmvRgEmX8pYgFBOXKA,,,,N,0,0,,,2013-11-05 11:09,2013-11-05 11:09,admin,admin,
500,102217,4512,26175,6590,0,N,N,N,CP_Drtn,TT_FinMile,DT_FixedDrtn,TK_NotStart,1.7,Complete MOBILIZATION of camp with Catering and accommodation facilities,,560,0,0,0,0,0,0,0,0,0,,,,2012-09-29 08:00,2012-09-29 08:00,,2012-07-27 10:30,2012-07-27 10:30,2012-07-27 10:30,2012-07-27 10:30,2012-07-27 10:30,2012-07-27 10:30,2012-09-29 08:00,2012-09-29 08:00,,PT_Normal,,,,,jJpiG1dtbEuOWkLiC/9ENA,,,,N,0,0,,,2013-11-05 11:09,2013-11-05 11:09,admin,admin,
501,102218,4512,26176,6590,0,N,N,N,CP_Drtn,TT_FinMile,DT_FixedDrtn,TK_NotStart,1.9,"Complete construction of Civil/Structural Work , including excavation, backfill",,560,128,0,0,0,0,0,0,0,0,,,,2012-11-03 10:00,2012-11-03 10:00,,2012-09-02 10:00,2012-09-02 10:00,2012-09-02 10:00,2012-09-02 10:00,2012-09-02 10:00,2012-09-02 10:00,2012-11-03 10:00,2012-11-03 10:00,,PT_Normal,,,,,K1dfV/wbckG3PBW3GLshqA,,,,N,0,0,,,2013-11-05 11:09,2013-11-05 11:09,admin,admin,
502,102219,4512,26177,6590,0,N,N,N,CP_Drtn,TT_FinMile,DT_FixedDrtn,TK_NotStart,2.A,Mechanical COmpleteing (MCC),,432,0,0,0,0,0,0,0,0,0,,,,2013-04-04 11:00,2013-04-04 11:00,,2013-02-17 09:00,2013-02-17 09:00,2013-02-17 09:00,2013-02-17 09:00,2013-02-17 09:00,2013-02-17 09:00,2013-04-04 11:00,2013-04-04 11:00,,PT_Normal,,,,,cv6sHvMDzE2kGhAVxjIybg,,,,N,0,0,,,2013-11-05 11:09,2013-11-05 11:09,admin,admin,
503,102220,4512,26178,6590,0,N,N,N,CP_Drtn,TT_FinMile,DT_FixedDrtn,TK_NotStart,1.10,Complete Installation of Task Lighting for the tanks,,432,0,0,0,0,0,0,0,0,0,,,,2013-07-25 11:00,2013-07-25 11:00,,2013-06-09 09:00,2013-06-09 09:00,2013-06-09 09:00,2013-06-09 09:00,2013-06-09 09:00,2013-06-09 09:00,2013-07-25 11:00,2013-07-25 11:00,,PT_Normal,,,,,FA01Rm9R5kqojd8KqDXEBw,,,,N,0,0,,,2013-11-05 11:09,2013-11-05 11:09,admin,admin,
504,102221,4512,26179,6590,0,N,N,N,CP_Drtn,TT_FinMile,DT_FixedDrtn,TK_NotStart,3.A,Third Party Testing,,432,0,0,0,0,0,0,0,0,0,,,,2013-08-08 17:00,2013-08-08 17:00,,2013-06-23 15:00,2013-06-23 15:00,2013-06-23 15:00,2013-06-23 15:00,2013-06-23 15:00,2013-06-23 15:00,2013-08-08 17:00,2013-08-08 17:00,,PT_Normal,,,,,DClD8rxonU+hRsUADtNSkQ,,,,N,0,0,,,2013-11-05 11:09,2013-11-05 11:09,admin,admin,
505,102222,4512,26180,6590,0,N,N,N,CP_Drtn,TT_FinMile,DT_FixedDrtn,TK_NotStart,4.A,Final Testing,,432,0,0,0,0,0,0,0,0,0,,,,2013-05-21 16:00,2013-05-21 16:00,,2013-04-05 11:30,2013-04-05 11:30,2013-04-05 11:30,2013-04-05 11:30,2013-04-05 11:30,2013-04-05 11:30,2013-05-21 16:00,2013-05-21 16:00,,PT_Normal,,,,,6Z86U9hU5UWUOH64oVIiWA,,,,N,0,0,,,2013-11-05 11:09,2013-11-05 11:09,admin,admin,
506,102223,4512,26181,6590,0,N,N,N,CP_Drtn,TT_FinMile,DT_FixedDrtn,TK_NotStart,6.A,Project Completion,,432,80,0,0,0,0,0,0,0,0,,,,2013-08-13 12:00,2013-08-13 12:00,,2013-06-27 15:00,2013-06-27 15:00,2013-06-27 15:00,2013-06-27 15:00,2013-06-27 15:00,2013-06-27 15:00,2013-08-13 12:00,2013-08-13 12:00,,PT_Normal,,,,,hE66XNfFKEezTLDPqjcCtw,,,,N,0,0,,,2013-11-05 11:09,2013-11-05 11:09,admin,admin,
507,102224,4512,26185,6590,0,N,N,N,CP_Drtn,TT_Task,DT_FixedDrtn,TK_NotStart,JF721.463,Soil Investigation Works,6911,0,0,16,0,20,20,16,0,0,0,,,,2012-06-30 07:00,2012-07-01 13:00,,2012-06-30 07:00,2012-07-01 13:00,2012-06-30 07:00,2012-07-01 13:00,2012-06-30 07:00,2012-07-01 13:00,2012-06-30 07:00,2012-07-01 13:00,,PT_Normal,,,,,dCenI07ckku7Cc44VIE2Nw,tilj/BgtPUyImT3a3vjOZA,,,Y,0,0,,,2013-11-05 11:09,2013-11-05 11:09,admin,admin,
508,102225,4512,26186,6590,0,N,N,N,CP_Drtn,TT_Task,DT_FixedDUR2,TK_NotStart,JF721.469,60% Submittal (Tank & Foundation Drawings),6917,40,0,8,0,24,24,8,0,0,0,,,,2012-07-22 10:00,2012-07-23 08:00,,2012-07-17 15:00,2012-07-18 13:00,2012-07-17 15:00,2012-07-18 13:00,2012-07-17 15:00,2012-07-18 13:00,2012-07-22 10:00,2012-07-23 08:00,,PT_Normal,,,,,fqyiJ0tiFU+OZ2+UZFzLZQ,pa4t8JX3xUOmdD13f/QgrQ,,,N,0,0,,,2013-11-05 11:09,2013-11-05 11:09,admin,admin,
509,102226,4512,26186,6590,0,N,N,N,CP_Drtn,TT_Task,DT_FixedDUR2,TK_NotStart,JF721.470,60% Comments Incooperation (Tanks & Foundation Drawings),6912,40,0,40,0,120,120,40,0,0,0,,,,2012-07-23 08:00,2012-07-27 10:30,,2012-07-18 13:00,2012-07-23 08:00,2012-07-18 13:00,2012-07-23 08:00,2012-07-18 13:00,2012-07-23 08:00,2012-07-23 08:00,2012-07-27 10:30,,PT_Normal,,,,,/ptrTO2rw02nVxjl60TYtQ,c7cKieqgX0eZB6jCi4CYQg,,,N,0,0,,,2013-11-05 11:09,2013-11-05 11:09,admin,admin,
510,102227,4512,26186,6590,0,N,N,N,CP_Drtn,TT_Task,DT_FixedDUR2,TK_NotStart,JF721.471,90% Submittal (Tanks & Foundation Drawings),6912,40,0,8,0,24,24,8,0,0,0,,,,2012-07-27 10:30,2012-07-28 11:00,,2012-07-23 08:00,2012-07-23 16:00,2012-07-23 08:00,2012-07-23 16:00,2012-07-23 08:00,2012-07-23 16:00,2012-07-27 10:30,2012-07-28 11:00,,PT_Normal,,,,,wtcHtL2U3E+21iQ1jFCmNQ,Oq91g8uAHkud4KjpRIm7Cw,,,N,0,0,,,2013-11-05 11:09,2013-11-05 11:09,admin,admin,
511,102228,4512,26186,6590,0,N,N,N,CP_Drtn,TT_Task,DT_FixedDUR2,TK_NotStart,JF721.472,90% Comments Incooperation (Tanks & Foundation Drawings),6913,40,0,16,0,48,48,16,0,0,0,,,,2012-07-28 11:00,2012-07-29 17:00,,2012-07-23 16:00,2012-07-25 12:00,2012-07-23 16:00,2012-07-25 12:00,2012-07-23 16:00,2012-07-25 12:00,2012-07-28 11:00,2012-07-29 17:00,,PT_Normal,,,,,C5lO4mPsHk2wzFeJPuCPrg,NLfQYfPgL0in5ot1mowPmA,,,N,0,0,,,2013-11-05 11:09,2013-11-05 11:09,admin,admin,
512,102229,4512,26186,6590,0,N,N,N,CP_Drtn,TT_Task,DT_FixedDUR2,TK_NotStart,JF721.473,IFC,6912,40,0,8,0,24,24,8,0,0,0,,,,2012-07-30 07:00,2012-07-30 15:00,,2012-07-25 12:00,2012-07-26 10:00,2012-07-25 12:00,2012-07-26 10:00,2012-07-25 12:00,2012-07-26 10:00,2012-07-30 07:00,2012-07-30 15:00,,PT_Normal,,,,,keEHFOidN0qq2tZTA3HMgA,YB8e0idN10af30ffswm68g,,,N,0,0,,,2013-11-05 11:09,2013-11-05 11:09,admin,admin,
513,102230,4512,26187,6590,0,N,N,N,CP_Drtn,TT_Task,DT_FixedDUR2,TK_NotStart,JF721.464,60% Submittal,6917,40,0,8,0,8,8,8,0,0,0,,,,2012-07-05 13:00,2012-07-06 13:30,,2012-07-01 13:00,2012-07-02 11:00,2012-07-01 13:00,2012-07-02 11:00,2012-07-01 13:00,2012-07-02 11:00,2012-07-05 13:00,2012-07-06 13:30,,PT_Normal,,,,,w2hzmTK6vUyjnCShLPDSfg,kuI23ko2K06nGh7pYlYbPw,,,N,0,0,,,2013-11-05 11:09,2013-11-05 11:09,admin,admin,
514,102231,4512,26187,6590,0,N,N,N,CP_Drtn,TT_Task,DT_FixedDUR2,TK_NotStart,JF721.465,60% Comments Incooperation,6917,40,0,56,0,56,56,56,0,0,0,,,,2012-07-06 13:30,2012-07-12 12:00,,2012-07-02 11:00,2012-07-08 12:00,2012-07-02 11:00,2012-07-08 12:00,2012-07-02 11:00,2012-07-08 12:00,2012-07-06 13:30,2012-07-12 12:00,,PT_Normal,,,,,1eBcGne/W0+gEt61fw0irA,0U9JnQMiOk6YIsiiWu85PQ,,,N,0,0,,,2013-11-05 11:09,2013-11-05 11:09,admin,admin,
515,102232,4512,26187,6590,0,N,N,N,CP_Drtn,TT_Task,DT_FixedDUR2,TK_NotStart,JF721.466,90% Submittal,6917,40,0,8,0,8,8,8,0,0,0,,,,2012-07-12 12:00,2012-07-13 12:30,,2012-07-08 12:00,2012-07-09 10:00,2012-07-08 12:00,2012-07-09 10:00,2012-07-08 12:00,2012-07-09 10:00,2012-07-12 12:00,2012-07-13 12:30,,PT_Normal,,,,,tWwP8pzJiU2uR/Kx8tvKHw,C7hTBAQqiEyYNqvlOGroXg,,,N,0,0,,,2013-11-05 11:09,2013-11-05 11:09,admin,admin,
516,102233,4512,26187,6590,0,N,N,N,CP_Drtn,TT_Task,DT_FixedDUR2,TK_NotStart,JF721.467,90% Comments Incooperation,6917,40,0,56,0,56,56,56,0,0,0,,,,2012-07-13 12:30,2012-07-19 11:00,,2012-07-09 10:00,2012-07-15 11:00,2012-07-09 10:00,2012-07-15 11:00,2012-07-09 10:00,2012-07-15 11:00,2012-07-13 12:30,2012-07-19 11:00,,PT_Normal,,,,,9Hii8KxNck23DBE3rxgBWA,UIcoV7UUWk2wV+KfS2SSeQ,,,N,0,0,,,2013-11-05 11:09,2013-11-05 11:09,admin,admin,
517,102234,4512,26187,6590,0,N,N,N,CP_Drtn,TT_Task,DT_FixedDUR2,TK_NotStart,JF721.468,IFC,6917,40,0,24,0,24,24,24,0,0,0,,,,2012-07-19 11:00,2012-07-22 10:00,,2012-07-15 11:00,2012-07-17 15:00,2012-07-15 11:00,2012-07-17 15:00,2012-07-15 11:00,2012-07-17 15:00,2012-07-19 11:00,2012-07-22 10:00,,PT_Normal,,,,,/xtlgvpcVU2HTM+bjpNNVA,fsVRMhL8s0SJGjy9GoYmEA,,,N,0,0,,,2013-11-05 11:09,2013-11-05 11:09,admin,admin,
518,102235,4512,26188,6590,0,N,N,N,CP_Drtn,TT_FinMile,DT_FixedDrtn,TK_NotStart,4.1,Complete survey and Geotechnical Investigation for Ad-Duaihi Storage Facility.,,40,0,0,0,0,0,0,0,0,0,,,,2012-07-05 13:00,2012-07-05 13:00,,2012-07-01 13:00,2012-07-01 13:00,2012-07-01 13:00,2012-07-01 13:00,2012-07-01 13:00,2012-07-01 13:00,2012-07-05 13:00,2012-07-05 13:00,,PT_Normal,,,,,MXark2a8mEiZFKNHz3wSbQ,,,,N,0,0,,,2013-11-05 11:09,2013-11-05 11:09,admin,admin,
519,102236,4512,26189,6590,0,N,N,N,CP_Drtn,TT_FinMile,DT_FixedDrtn,TK_NotStart,4.2,Complete Engineering design and Calculations,,40,0,0,0,0,0,0,0,0,0,,,,2012-07-22 10:00,2012-07-22 10:00,,2012-07-17 15:00,2012-07-17 15:00,2012-07-17 15:00,2012-07-17 15:00,2012-07-17 15:00,2012-07-17 15:00,2012-07-22 10:00,2012-07-22 10:00,,PT_Normal,,,,,77OH99YxpEOvO1zMkwPE7g,,,,N,0,0,,,2013-11-05 11:09,2013-11-05 11:09,admin,admin,
520,102237,4512,26231,6590,0,N,N,N,CP_Drtn,TT_FinMile,DT_FixedDrtn,TK_NotStart,4.3,Complete Fabrication and GA Drawing with Bill of Quantities,,40,0,0,0,0,0,0,0,0,0,,,,2012-07-30 15:00,2012-07-30 15:00,,2012-07-26 10:00,2012-07-26 10:00,2012-07-26 10:00,2012-07-26 10:00,2012-07-26 10:00,2012-07-26 10:00,2012-07-30 15:00,2012-07-30 15:00,,PT_Normal,,,,,cT7AKl8IykSyU8LKl3B5Og,,,,N,0,0,,,2013-11-05 11:09,2013-11-05 11:09,admin,admin,
521,102238,4512,26192,6590,0,N,N,N,CP_Drtn,TT_Task,DT_FixedDUR2,TK_NotStart,JF721.474,PO Issued,,40,0,48,0,0,0,48,0,0,0,,,,2012-07-30 15:00,2012-08-05 08:00,,2012-07-26 10:00,2012-07-31 13:00,2012-07-26 10:00,2012-07-31 13:00,2012-07-26 10:00,2012-07-31 13:00,2012-07-30 15:00,2012-08-05 08:00,,PT_Normal,,,,,loR0ZfLBc06+qgvjRe7UBg,zCk7aObfCUGOntxgxjFmMQ,,,N,0,0,,,2013-11-05 11:09,2013-11-05 11:09,admin,admin,
522,102239,4512,26192,6590,0,N,N,N,CP_Drtn,TT_Task,DT_FixedDUR2,TK_NotStart,JF721.475,Ma'aden Site Delievery,,40,0,408,0,0,0,408,0,0,0,,,,2012-08-05 08:00,2012-09-20 16:00,,2012-07-31 13:00,2012-09-16 16:00,2012-07-31 13:00,2012-09-16 16:00,2012-07-31 13:00,2012-09-16 16:00,2012-08-05 08:00,2012-09-20 16:00,,PT_Normal,,,,,3BO6vUBB70+pw/s66xwW6g,6oHrZtG370unhirho4VupA,,,N,0,0,,,2013-11-05 11:09,2013-11-05 11:09,admin,admin,
523,102240,4512,26193,6590,0,N,N,N,CP_Drtn,TT_Task,DT_FixedDUR2,TK_NotStart,JF721.476,Approval for Vendor Drawings & SPecifications,,288,0,16,0,0,0,16,0,0,0,,,,2012-08-28 07:00,2012-08-29 13:00,,2012-07-24 14:00,2012-07-26 10:00,2012-07-24 14:00,2012-07-26 10:00,2012-07-24 14:00,2012-07-26 10:00,2012-08-28 07:00,2012-08-29 13:00,,PT_Normal,,,,,HRlrkPaNUU6HaiykfvtSKA,6r11gtJdnUe/59WOKiaHmQ,,,N,0,0,,,2013-11-05 11:09,2013-11-05 11:09,admin,admin,
524,102241,4512,26193,6590,0,N,N,N,CP_Drtn,TT_Task,DT_FixedDUR2,TK_NotStart,JF721.477,PO Issued,,991.983333,0,224,0,0,0,224,0,0,0,,,,2012-11-14 16:59,2012-12-09 10:59,,2012-07-26 10:00,2012-08-22 14:00,2012-07-26 10:00,2012-08-22 14:00,2012-07-26 10:00,2012-08-22 14:00,2012-11-14 16:59,2012-12-09 10:59,,PT_Normal,,,,,ZI9/EKKnkUi0l7OVmVCXQg,NmLAcJcOhUaoeMu+fvzAow,,,N,0,0,,,2013-11-05 11:09,2013-11-05 11:09,admin,admin,
525,102242,4512,26193,6590,0,N,N,N,CP_Drtn,TT_Task,DT_FixedDUR2,TK_NotStart,JF721.478,CP System Delievered to Ma'aden Site & Installed,6964,40,0,112,0,2000,2000,112,800,0,800,,,,2013-06-23 15:00,2013-07-05 14:30,,2013-06-19 10:00,2013-07-01 12:00,2013-06-19 10:00,2013-07-01 12:00,2013-06-19 10:00,2013-07-01 12:00,2013-06-23 15:00,2013-07-05 14:30,,PT_Normal,,,,,SlD9JIIMRUirxTzVT+HM+g,+o+DyVVQ/kCd+4ON0641Rw,,,N,0,0,,,2013-11-05 11:09,2013-11-05 11:09,admin,admin,
526,102243,4512,26193,6590,0,N,N,N,CP_Drtn,TT_Task,DT_FixedDUR2,TK_NotStart,JF721.479,Ma'aden CP Inspection,6942,40,0,16,0,90,90,16,40,0,40,,,,2013-07-06 07:00,2013-07-07 13:00,,2013-07-01 12:00,2013-07-03 08:00,2013-07-01 12:00,2013-07-03 08:00,2013-07-01 12:00,2013-07-03 08:00,2013-07-06 07:00,2013-07-07 13:00,,PT_Normal,,,,,agSS1oxQdk+GozYbSGNiXQ,DX4s+DB7hUuHMSWuFd396Q,,,N,0,0,,,2013-11-05 11:09,2013-11-05 11:09,admin,admin,
527,102244,4512,26194,6590,0,N,N,N,CP_Drtn,TT_Task,DT_FixedDUR2,TK_NotStart,JF721.482,Approval For Vendor Drawings & Specifications,,288,0,16,0,0,0,16,0,0,0,,,,2012-08-28 07:00,2012-08-29 13:00,,2012-07-24 14:00,2012-07-26 10:00,2012-07-24 14:00,2012-07-26 10:00,2012-07-24 14:00,2012-07-26 10:00,2012-08-28 07:00,2012-08-29 13:00,,PT_Normal,,,,,P+6ckmsLOEenmT4MrAJS6Q,xFeCmUgdS0OLH25pLZzIMQ,,,N,0,0,,,2013-11-05 11:09,2013-11-05 11:09,admin,admin,
528,102245,4512,26194,6590,0,N,N,N,CP_Drtn,TT_Task,DT_FixedDUR2,TK_NotStart,JF721.483,P.O Issued,,1183.983333,192,32,0,0,0,32,0,0,0,,,,2012-12-05 13:59,2012-12-09 10:59,,2012-07-26 10:00,2012-07-29 17:00,2012-07-26 10:00,2012-07-29 17:00,2012-07-26 10:00,2012-07-29 17:00,2012-12-05 13:59,2012-12-09 10:59,,PT_Normal,,,,,ICoBDSj2eEKiP8/P3I54UA,qnXKJs7SVE2Aq/+ydLIq0g,,,N,0,0,,,2013-11-05 11:09,2013-11-05 11:09,admin,admin,
529,102246,4512,26195,6590,0,N,N,N,CP_Drtn,TT_Task,DT_FixedDUR2,TK_NotStart,JF721.484,Approval for vendor Drawings & Specifcations,,288,0,24,0,0,0,24,0,0,0,,,,2012-08-28 07:00,2012-08-30 11:00,,2012-07-24 14:00,2012-07-27 10:30,2012-07-24 14:00,2012-07-27 10:30,2012-07-24 14:00,2012-07-27 10:30,2012-08-28 07:00,2012-08-30 11:00,,PT_Normal,,,,,Pk6nkH8SKUCFaEpjjApJrA,cSJ8dgKJP0Ww5ZhDDHiEBQ,,,N,0,0,,,2013-11-05 11:09,2013-11-05 11:09,admin,admin,
530,102247,4512,26195,6590,0,N,N,N,CP_Drtn,TT_Task,DT_FixedDUR2,TK_NotStart,JF721.485,P.O Issued,,1151.983333,160,56,0,0,0,56,0,0,0,,,,2012-12-03 09:59,2012-12-09 10:59,,2012-07-27 10:30,2012-08-02 09:00,2012-07-27 10:30,2012-08-02 09:00,2012-07-27 10:30,2012-08-02 09:00,2012-12-03 09:59,2012-12-09 10:59,,PT_Normal,,,,,tIr1zGijO0uxYXx0sUSCSA,oeNA0lF1IUuYn1p65K4tsA,,,N,0,0,,,2013-11-05 11:09,2013-11-05 11:09,admin,admin,
531,102248,4512,26195,6590,0,N,N,N,CP_Drtn,TT_Task,DT_FixedDUR2,TK_NotStart,JF721.486,Instrumentation Delievered to Ma'aden & Installed,6942,40,0,160,0,1300,1300,160,520,0,520,,,,2013-07-07 13:00,2013-07-24 13:00,,2013-07-03 08:00,2013-07-20 13:00,2013-07-03 08:00,2013-07-20 13:00,2013-07-03 08:00,2013-07-20 13:00,2013-07-07 13:00,2013-07-24 13:00,,PT_Normal,,,,,5QgUIIFkq0yE4oeFMIQyrA,XWpE3LpQKUSrjVSLh/WhAA,,,N,0,0,,,2013-11-05 11:09,2013-11-05 11:09,admin,admin,
532,102249,4512,26195,6590,0,N,N,N,CP_Drtn,TT_Task,DT_FixedDUR2,TK_NotStart,JF721.487,Ma'aden Instrumentation Inspection,6965,40,0,16,0,100,100,16,40,0,40,,,,2013-07-24 13:00,2013-07-26 11:30,,2013-07-20 13:00,2013-07-22 09:00,2013-07-20 13:00,2013-07-22 09:00,2013-07-20 13:00,2013-07-22 09:00,2013-07-24 13:00,2013-07-26 11:30,,PT_Normal,,,,,Lu5h+HBve0SyBc5e2mgmNg,o7LARIfvNEaQ09oTYwd4YA,,,N,0,0,,,2013-11-05 11:09,2013-11-05 11:09,admin,admin,
533,102250,4512,26196,6590,0,N,N,N,CP_Drtn,TT_Task,DT_FixedDUR2,TK_NotStart,JF721.488,Approve Vendor Drawings & Specifcations,,304,0,16,0,0,0,16,0,0,0,,,,2012-08-22 14:00,2012-08-24 12:30,,2012-07-17 15:00,2012-07-19 11:00,2012-07-17 15:00,2012-07-19 11:00,2012-07-17 15:00,2012-07-19 11:00,2012-08-22 14:00,2012-08-24 12:30,,PT_Normal,,,,,VGXueEf8KkSe1D2DT6pnLw,UxxwI734Ikm3B6zma4PbGA,,,N,0,0,,,2013-11-05 11:09,2013-11-05 11:09,admin,admin,
534,102251,4512,26196,6590,0,N,N,N,CP_Drtn,TT_Task,DT_FixedDUR2,TK_NotStart,JF721.489,P.O Issued,,304,0,16,0,0,0,16,0,0,0,,,,2012-08-24 12:30,2012-08-26 11:00,,2012-07-19 11:00,2012-07-21 12:00,2012-07-19 11:00,2012-07-21 12:00,2012-07-19 11:00,2012-07-21 12:00,2012-08-24 12:30,2012-08-26 11:00,,PT_Normal,,,,,7BjTk2pC+Um1J5uquAwHSg,Y+QGEhmC5UqgCTu9l309JA,,,N,0,0,,,2013-11-05 11:09,2013-11-05 11:09,admin,admin,
535,102252,4512,26238,6590,0,N,N,N,CP_Drtn,TT_Task,DT_FixedDUR2,TK_NotStart,JF721.490,Approval for Vendor Drawings & Specifications,,288,0,40,0,0,0,40,0,0,0,,,,2012-08-30 11:00,2012-09-03 16:00,,2012-07-27 10:30,2012-07-31 13:00,2012-07-27 10:30,2012-07-31 13:00,2012-07-27 10:30,2012-07-31 13:00,2012-08-30 11:00,2012-09-03 16:00,,PT_Normal,,,,,or13p55TT0yMyPSxOYA8/g,At760YrmaEqZSF6XKJXmdA,,,N,0,0,,,2013-11-05 11:09,2013-11-05 11:09,admin,admin,
536,102253,4512,26238,6590,0,N,N,N,CP_Drtn,TT_Task,DT_FixedDUR2,TK_NotStart,JF721.491,PO  Issued,,1264,0,40,0,0,0,40,0,0,0,,,,2012-12-19 12:00,2012-12-23 17:00,,2012-07-31 13:00,2012-08-05 08:00,2012-07-31 13:00,2012-08-05 08:00,2012-07-31 13:00,2012-08-05 08:00,2012-12-19 12:00,2012-12-23 17:00,,PT_Normal,,,,,4G2WSAJHWE+MTJKXoRseUg,QM2hzVjO+0OX23YpP0LSlA,,,N,0,0,,,2013-11-05 11:09,2013-11-05 11:09,admin,admin,
537,102254,4512,26239,6590,0,N,N,N,CP_Drtn,TT_Task,DT_FixedDUR2,TK_NotStart,JF721.492,Approval for Vendor Drawings & Specifications,,288,0,40,0,0,0,40,0,0,0,,,,2012-08-30 11:00,2012-09-03 16:00,,2012-07-27 10:30,2012-07-31 13:00,2012-07-27 10:30,2012-07-31 13:00,2012-07-27 10:30,2012-07-31 13:00,2012-08-30 11:00,2012-09-03 16:00,,PT_Normal,,,,,/nwtmNYc/keq2R3epzwqZQ,P4hIy46WnkaAgBahNcd1Fg,,,N,0,0,,,2013-11-05 11:09,2013-11-05 11:09,admin,admin,
538,102255,4512,26239,6590,0,N,N,N,CP_Drtn,TT_Task,DT_FixedDUR2,TK_NotStart,JF721.493,PO issued,,288,0,40,0,0,0,40,0,0,0,,,,2012-09-03 16:00,2012-09-08 11:00,,2012-07-31 13:00,2012-08-05 08:00,2012-07-31 13:00,2012-08-05 08:00,2012-07-31 13:00,2012-08-05 08:00,2012-09-03 16:00,2012-09-08 11:00,,PT_Normal,,,,,PbsWRv/pJ0iMrL/TFQE0Pg,Q+7N4KuxlESJ8vFhIW4qJw,,,N,0,0,,,2013-11-05 11:09,2013-11-05 11:09,admin,admin,
539,102256,4512,26199,6590,0,N,N,N,CP_Drtn,TT_Task,DT_FixedDUR2,TK_NotStart,JF721.494,Approval For vendor Specifcations,,616,0,56,0,0,0,56,0,0,0,,,,2012-10-09 09:00,2012-10-15 10:00,,2012-07-31 13:00,2012-08-06 14:00,2012-07-31 13:00,2012-08-06 14:00,2012-07-31 13:00,2012-08-06 14:00,2012-10-09 09:00,2012-10-15 10:00,,PT_Normal,,,,,9I5mt4+KAEGH4+XIUU2Oqg,y+HmYyh9cEyxgRIPJ0WXkQ,,,N,0,0,,,2013-11-05 11:09,2013-11-05 11:09,admin,admin,
540,102257,4512,26199,6590,0,N,N,N,CP_Drtn,TT_Task,DT_FixedDUR2,TK_NotStart,JF721.495,PO issued,,616,0,24,0,0,0,24,0,0,0,,,,2012-10-15 10:00,2012-10-17 14:00,,2012-08-06 14:00,2012-08-09 08:00,2012-08-06 14:00,2012-08-09 08:00,2012-08-06 14:00,2012-08-09 08:00,2012-10-15 10:00,2012-10-17 14:00,,PT_Normal,,,,,XvbxwQAZ8UyWOR4mKyEM0w,np9x9mx8dE6Sens4t7ctEQ,,,N,0,0,,,2013-11-05 11:09,2013-11-05 11:09,admin,admin,
541,102258,4512,26200,6590,0,N,N,N,CP_Drtn,TT_Task,DT_FixedDUR2,TK_NotStart,JF721.496,Plates,,304,0,728,0,0,0,728,0,0,0,,,,2012-08-26 11:00,2012-11-14 09:00,,2012-07-21 12:00,2012-10-10 15:00,2012-07-21 12:00,2012-10-10 15:00,2012-07-21 12:00,2012-10-10 15:00,2012-08-26 11:00,2012-11-14 09:00,,PT_Normal,,,,,GrmY6vv3TUOUrPSYhD6DXg,p4b5Mw6c2Uau5vTANZNEzw,,,N,0,0,,,2013-11-05 11:09,2013-11-05 11:09,admin,admin,
542,102259,4512,26200,6590,0,N,N,N,CP_Drtn,TT_Task,DT_FixedDUR2,TK_NotStart,JF721.497,Profile Material,,1264,256,248,0,0,0,248,0,0,0,,,,2012-12-24 07:00,2013-01-19 15:00,,2012-08-05 08:00,2012-09-03 16:00,2012-08-05 08:00,2012-09-03 16:00,2012-08-05 08:00,2012-09-03 16:00,2012-12-24 07:00,2013-01-19 15:00,,PT_Normal,,,,,vg5m273DW0ex7qsZXua8vQ,XvbN9j8Um0u+a5vi4V340A,,,N,0,0,,,2013-11-05 11:09,2013-11-05 11:09,admin,admin,
543,102260,4512,26200,6590,0,N,N,N,CP_Drtn,TT_Task,DT_FixedDUR2,TK_NotStart,JF721.498,Pipes & Fittings,,288,0,368,0,0,0,368,0,0,0,,,,2012-09-08 11:00,2012-10-17 14:00,,2012-08-05 08:00,2012-09-16 16:00,2012-08-05 08:00,2012-09-16 16:00,2012-08-05 08:00,2012-09-16 16:00,2012-09-08 11:00,2012-10-17 14:00,,PT_Normal,,,,,dxWElQDG8kCK3d2WJ/xOCA,xlcN0EV8I0SapJEwHcmzTg,,,N,0,0,,,2013-11-05 11:09,2013-11-05 11:09,admin,admin,
544,102261,4512,26201,6590,0,N,N,N,CP_Drtn,TT_Task,DT_FixedDUR2,TK_NotStart,JF721.499,Define Layout,,304,0,32,0,0,0,32,0,0,0,,,,2012-10-16 16:00,2012-10-20 13:00,,2012-09-14 09:30,2012-09-17 14:00,2012-09-14 09:30,2012-09-17 14:00,2012-09-14 09:30,2012-09-17 14:00,2012-10-16 16:00,2012-10-20 13:00,,PT_Normal,,,,,YEhL1a22XUCW3RUe/57fNQ,NqASMdRNOUqFzefQ0Sq3bQ,,,N,0,0,,,2013-11-05 11:09,2013-11-05 11:09,admin,admin,
545,102262,4512,26201,6590,0,N,N,N,CP_Drtn,TT_Task,DT_FixedDUR2,TK_NotStart,JF721.500,Cutting,,304,0,64,0,0,0,64,0,0,0,,,,2012-10-16 16:00,2012-10-23 15:00,,2012-09-14 09:30,2012-09-20 16:00,2012-09-14 09:30,2012-09-20 16:00,2012-09-14 09:30,2012-09-20 16:00,2012-10-16 16:00,2012-10-23 15:00,,PT_Normal,,,,,04gxlKAyBU2RxCblXPjZig,tt3gxgqxak+7rDxte4XbAg,,,N,0,0,,,2013-11-05 11:09,2013-11-05 11:09,admin,admin,
546,102263,4512,26201,6590,0,N,N,N,CP_Drtn,TT_Task,DT_FixedDUR2,TK_NotStart,JF721.501,Fit-up,,304,0,56,0,0,0,56,0,0,0,,,,2012-10-21 11:00,2012-10-28 17:00,,2012-09-18 12:00,2012-09-24 13:00,2012-09-18 12:00,2012-09-24 13:00,2012-09-18 12:00,2012-09-24 13:00,2012-10-21 11:00,2012-10-28 17:00,,PT_Normal,,,,,CysP/67roEeq9tZ2NqNVaA,+bPJdke39EC0UzUc8wEY4A,,,N,0,0,,,2013-11-05 11:09,2013-11-05 11:09,admin,admin,
547,102264,4512,26201,6590,0,N,N,N,CP_Drtn,TT_Task,DT_FixedDUR2,TK_NotStart,JF721.502,Welding,,304,0,64,0,0,0,64,0,0,0,,,,2012-10-23 07:00,2012-10-31 11:00,,2012-09-20 08:00,2012-09-26 17:00,2012-09-20 08:00,2012-09-26 17:00,2012-09-20 08:00,2012-09-26 17:00,2012-10-23 07:00,2012-10-31 11:00,,PT_Normal,,,,,Fn8J9US/Dkm3exbKG385CA,BabspVpVGkKisBRG/u9JMw,,,N,0,0,,,2013-11-05 11:09,2013-11-05 11:09,admin,admin,
548,102265,4512,26201,6590,0,N,N,N,CP_Drtn,TT_Task,DT_FixedDUR2,TK_NotStart,JF721.503,Shop Blasting/Painting,,304,0,56,0,0,0,56,0,0,0,,,,2012-10-28 09:00,2012-11-03 10:00,,2012-09-23 15:00,2012-09-29 16:00,2012-09-23 15:00,2012-09-29 16:00,2012-09-23 15:00,2012-09-29 16:00,2012-10-28 09:00,2012-11-03 10:00,,PT_Normal,,,,,OEvoY97QK0Co/T/1xbtJyw,JgwK0VqNtkWPp1NEl6/QyA,,,N,0,0,,,2013-11-05 11:09,2013-11-05 11:09,admin,admin,
549,102266,4512,26201,6590,0,N,N,N,CP_Drtn,TT_Task,DT_FixedDUR2,TK_NotStart,JF721.504,Inspect & Accept for use,,304,0,16,0,0,0,16,0,0,0,,,,2012-11-03 10:00,2012-11-04 16:00,,2012-09-29 16:00,2012-10-01 12:00,2012-09-29 16:00,2012-10-01 12:00,2012-09-29 16:00,2012-10-01 12:00,2012-11-03 10:00,2012-11-04 16:00,,PT_Normal,,,,,qdWG6uMz30OcLERpegk5eg,NIRxJhgScUO/HK/CeyoG5g,,,N,0,0,,,2013-11-05 11:09,2013-11-05 11:09,admin,admin,
550,102267,4512,26202,6590,0,N,N,N,CP_Drtn,TT_Task,DT_FixedDUR2,TK_NotStart,JF721.505,Define Layout,,616,0,56,0,0,0,56,0,0,0,,,,2012-11-24 15:00,2012-11-30 13:30,,2012-09-17 14:00,2012-09-23 15:00,2012-09-17 14:00,2012-09-23 15:00,2012-09-17 14:00,2012-09-23 15:00,2012-11-24 15:00,2012-11-30 13:30,,PT_Normal,,,,,Awcp4lzkP0qnTf5FZkATOw,KvXnSNnJE0ebZGxmJ4g79A,,,N,0,0,,,2013-11-05 11:09,2013-11-05 11:09,admin,admin,
551,102268,4512,26202,6590,0,N,N,N,CP_Drtn,TT_Task,DT_FixedDUR2,TK_NotStart,JF721.506,Cutting,,616,0,128,0,0,0,128,0,0,0,,,,2012-11-24 15:00,2012-12-08 13:00,,2012-09-17 14:00,2012-10-01 12:00,2012-09-17 14:00,2012-10-01 12:00,2012-09-17 14:00,2012-10-01 12:00,2012-11-24 15:00,2012-12-08 13:00,,PT_Normal,,,,,6iBDPihtpkGVg5ORwaW3jg,HpEj9IuMTkSNMW2leNhO7Q,,,N,0,0,,,2013-11-05 11:09,2013-11-05 11:09,admin,admin,
552,102269,4512,26202,6590,0,N,N,N,CP_Drtn,TT_Task,DT_FixedDUR2,TK_NotStart,JF721.507,Bevelling/Rolling,,616,0,128,0,0,0,128,0,0,0,,,,2012-11-28 07:00,2012-12-11 15:00,,2012-09-20 16:00,2012-10-04 14:00,2012-09-20 16:00,2012-10-04 14:00,2012-09-20 16:00,2012-10-04 14:00,2012-11-28 07:00,2012-12-11 15:00,,PT_Normal,,,,,gUpWo1VNiU+ifWcfDuL+5w,cYzpiAMs+0KOa/HVaZX2AA,,,N,0,0,,,2013-11-05 11:09,2013-11-05 11:09,admin,admin,
553,102270,4512,26202,6590,0,N,N,N,CP_Drtn,TT_Task,DT_FixedDUR2,TK_NotStart,JF721.508,Shop Blasting/Painting,,616,0,168,0,0,0,168,0,0,0,,,,2012-12-02 12:00,2012-12-20 10:00,,2012-09-25 11:00,2012-10-13 14:00,2012-09-25 11:00,2012-10-13 14:00,2012-09-25 11:00,2012-10-13 14:00,2012-12-02 12:00,2012-12-20 10:00,,PT_Normal,,,,,RQzK7Ov7pUyDcFs0MYxMDg,7HNi5PeaV0y2Y2hivMcf9w,,,N,0,0,,,2013-11-05 11:09,2013-11-05 11:09,admin,admin,
554,102271,4512,26202,6590,0,N,N,N,CP_Drtn,TT_Task,DT_FixedDUR2,TK_NotStart,JF721.509,Inspect & Accept for use,,616,0,24,0,0,0,24,0,0,0,,,,2012-12-20 10:00,2012-12-23 09:00,,2012-10-13 14:00,2012-10-16 08:00,2012-10-13 14:00,2012-10-16 08:00,2012-10-13 14:00,2012-10-16 08:00,2012-12-20 10:00,2012-12-23 09:00,,PT_Normal,,,,,zS0Np4YgikuJfd0Hnxp2VQ,2GHiYf/TR0Koqh0FB+0+zg,,,N,0,0,,,2013-11-05 11:09,2013-11-05 11:09,admin,admin,
555,102272,4512,26203,6590,0,N,N,N,CP_Drtn,TT_Task,DT_FixedDUR2,TK_NotStart,JF721.510,Define layout,,1008,0,24,0,0,0,24,0,0,0,,,,2013-01-19 15:00,2013-01-22 09:00,,2012-10-01 12:00,2012-10-03 16:00,2012-10-01 12:00,2012-10-03 16:00,2012-10-01 12:00,2012-10-03 16:00,2013-01-19 15:00,2013-01-22 09:00,,PT_Normal,,,,,MUSz3adB+EOUudBYog9+eg,BObSzZpwSEyt71E/AtUl6w,,,N,0,0,,,2013-11-05 11:09,2013-11-05 11:09,admin,admin,
556,102273,4512,26203,6590,0,N,N,N,CP_Drtn,TT_Task,DT_FixedDUR2,TK_NotStart,JF721.511,Cutting,,1008,0,40,0,0,0,40,0,0,0,,,,2013-01-22 09:00,2013-01-26 14:00,,2012-10-03 16:00,2012-10-08 11:00,2012-10-03 16:00,2012-10-08 11:00,2012-10-03 16:00,2012-10-08 11:00,2013-01-22 09:00,2013-01-26 14:00,,PT_Normal,,,,,1YgqgzNBk0a43Akip/eONg,AmRQTCoh50qjBmbNOJIlPA,,,N,0,0,,,2013-11-05 11:09,2013-11-05 11:09,admin,admin,
557,102274,4512,26203,6590,0,N,N,N,CP_Drtn,TT_Task,DT_FixedDUR2,TK_NotStart,JF721.512,Bevelling,,1008,0,48,0,0,0,48,0,0,0,,,,2013-01-23 15:00,2013-01-28 10:00,,2012-10-06 07:00,2012-10-10 15:00,2012-10-06 07:00,2012-10-10 15:00,2012-10-06 07:00,2012-10-10 15:00,2013-01-23 15:00,2013-01-28 10:00,,PT_Normal,,,,,2o5fsTVIx0mcikJwaK1nZw,yFpHDPcaYUWOe29l70K2vw,,,N,0,0,,,2013-11-05 11:09,2013-11-05 11:09,admin,admin,
558,102275,4512,26203,6590,0,N,N,N,CP_Drtn,TT_Task,DT_FixedDUR2,TK_NotStart,JF721.513,Fit-up/Welding,,1008,0,104,0,0,0,104,0,0,0,,,,2013-01-26 14:00,2013-02-05 15:00,,2012-10-08 11:00,2012-10-19 12:30,2012-10-08 11:00,2012-10-19 12:30,2012-10-08 11:00,2012-10-19 12:30,2013-01-26 14:00,2013-02-05 15:00,,PT_Normal,,,,,+pEAuut9PE+DCN7pTjXx6A,qSE5Fing/0mvKJhg5mIVeA,,,N,0,0,,,2013-11-05 11:09,2013-11-05 11:09,admin,admin,
559,102276,4512,26203,6590,0,N,N,N,CP_Drtn,TT_Task,DT_FixedDUR2,TK_NotStart,JF721.514,Blasting/Painting,,1008,0,72,0,0,0,72,0,0,0,,,,2013-01-31 12:00,2013-02-08 11:30,,2012-10-14 12:00,2012-10-22 09:00,2012-10-14 12:00,2012-10-22 09:00,2012-10-14 12:00,2012-10-22 09:00,2013-01-31 12:00,2013-02-08 11:30,,PT_Normal,,,,,i4hq2aX8vECYeeyO1N52Vg,P4/Fk4uRBEatogu64eu/Nw,,,N,0,0,,,2013-11-05 11:09,2013-11-05 11:09,admin,admin,
560,102277,4512,26203,6590,0,N,N,N,CP_Drtn,TT_Task,DT_FixedDUR2,TK_NotStart,JF721.515,Inspect & Accept for use,,1008,0,16,0,0,0,16,0,0,0,,,,2013-02-08 11:30,2013-02-10 10:00,,2012-10-22 09:00,2012-10-23 15:00,2012-10-22 09:00,2012-10-23 15:00,2012-10-22 09:00,2012-10-23 15:00,2013-02-08 11:30,2013-02-10 10:00,,PT_Normal,,,,,IuseVlUI3UK1OdOsY7MyFw,mf4ZiKwzEkWAlgfh/a1UzQ,,,N,0,0,,,2013-11-05 11:09,2013-11-05 11:09,admin,admin,
561,102278,4512,26204,6590,0,N,N,N,CP_Drtn,TT_Task,DT_FixedDUR2,TK_NotStart,JF721.516,Define Layout,,1200,0,32,0,0,0,32,0,0,0,,,,2013-02-26 12:00,2013-03-02 09:00,,2012-10-19 12:30,2012-10-22 17:00,2012-10-19 12:30,2012-10-22 17:00,2012-10-19 12:30,2012-10-22 17:00,2013-02-26 12:00,2013-03-02 09:00,,PT_Normal,,,,,nubAmXu9+kmSR7698LrYww,4EwGlVvj1Euqj7jLBXyyvw,,,N,0,0,,,2013-11-05 11:09,2013-11-05 11:09,admin,admin,
562,102279,4512,26204,6590,0,N,N,N,CP_Drtn,TT_Task,DT_FixedDUR2,TK_NotStart,JF721.517,Cutting,,1200,0,48,0,0,0,48,0,0,0,,,,2013-03-02 09:00,2013-03-06 17:00,,2012-10-23 07:00,2012-10-29 15:00,2012-10-23 07:00,2012-10-29 15:00,2012-10-23 07:00,2012-10-29 15:00,2013-03-02 09:00,2013-03-06 17:00,,PT_Normal,,,,,hJrjYqPDKU+uaT7bM6p7NA,FnjnSPuQ8EGpxBoPL3gghg,,,N,0,0,,,2013-11-05 11:09,2013-11-05 11:09,admin,admin,
563,102280,4512,26204,6590,0,N,N,N,CP_Drtn,TT_Task,DT_FixedDUR2,TK_NotStart,JF721.518,Fit-Up,,1200,0,72,0,0,0,72,0,0,0,,,,2013-03-07 07:00,2013-03-14 14:00,,2012-10-29 15:00,2012-11-06 12:00,2012-10-29 15:00,2012-11-06 12:00,2012-10-29 15:00,2012-11-06 12:00,2013-03-07 07:00,2013-03-14 14:00,,PT_Normal,,,,,Wjot9IHpuEG/2JR+4uyrRw,2Avp9YRmPUmCASJKMgeCLg,,,N,0,0,,,2013-11-05 11:09,2013-11-05 11:09,admin,admin,
564,102281,4512,26204,6590,0,N,N,N,CP_Drtn,TT_Task,DT_FixedDUR2,TK_NotStart,JF721.519,Welding,,1200,0,88,0,0,0,88,0,0,0,,,,2013-03-19 09:00,2013-03-28 12:00,,2012-11-11 07:00,2012-11-20 10:00,2012-11-11 07:00,2012-11-20 10:00,2012-11-11 07:00,2012-11-20 10:00,2013-03-19 09:00,2013-03-28 12:00,,PT_Normal,,,,,l1lpD2qBckWCPrF42+DDzQ,fKb7wQneJkSqokYzrd7Ntg,,,N,0,0,,,2013-11-05 11:09,2013-11-05 11:09,admin,admin,
565,102282,4512,26204,6590,0,N,N,N,CP_Drtn,TT_Task,DT_FixedDUR2,TK_NotStart,JF721.520,Blasting/Painting,,1200,0,88,0,0,0,88,0,0,0,,,,2013-03-24 12:00,2013-04-02 15:00,,2012-11-15 15:00,2012-11-25 13:00,2012-11-15 15:00,2012-11-25 13:00,2012-11-15 15:00,2012-11-25 13:00,2013-03-24 12:00,2013-04-02 15:00,,PT_Normal,,,,,k0zsgrSQtkeqTjuEYoWIMg,BwP2ymGIUU+c2fXN6sVgJg,,,N,0,0,,,2013-11-05 11:09,2013-11-05 11:09,admin,admin,
566,102283,4512,26204,6590,0,N,N,N,CP_Drtn,TT_Task,DT_FixedDUR2,TK_NotStart,JF721.521,Inspect & Accept for use,,1200,0,24,0,0,0,24,0,0,0,,,,2013-04-02 15:00,2013-04-05 11:30,,2012-11-25 13:00,2012-11-27 17:00,2012-11-25 13:00,2012-11-27 17:00,2012-11-25 13:00,2012-11-27 17:00,2013-04-02 15:00,2013-04-05 11:30,,PT_Normal,,,,,bxofZW+8NkOQCqm1VvaGdA,o+wMiGtSoUKh2J48Anp8Dw,,,N,0,0,,,2013-11-05 11:09,2013-11-05 11:09,admin,admin,
567,102284,4512,26205,6590,0,N,N,N,CP_Drtn,TT_Task,DT_FixedDUR2,TK_NotStart,JF721.522,"Annular,Bottom & Sump",,304,264,56,0,0,0,56,0,0,0,,,,2012-11-04 16:00,2012-11-10 17:00,,2012-10-01 12:00,2012-10-07 13:00,2012-10-01 12:00,2012-10-07 13:00,2012-10-01 12:00,2012-10-07 13:00,2012-11-04 16:00,2012-11-10 17:00,,PT_Normal,,,,,ythHHwDFeEyH4mmLDef6Iw,aL93bd7K20m30+6GK2mPUA,,,N,0,0,,,2013-11-05 11:09,2013-11-05 11:09,admin,admin,
568,102285,4512,26205,6590,0,N,N,N,CP_Drtn,TT_Task,DT_FixedDUR2,TK_NotStart,JF721.523,"Shell Courses #1,#2,#3,#4",,616,576,104,0,0,0,104,0,0,0,,,,2012-12-23 09:00,2013-01-03 08:00,,2012-10-16 08:00,2012-10-28 17:00,2012-10-16 08:00,2012-10-28 17:00,2012-10-16 08:00,2012-10-28 17:00,2012-12-23 09:00,2013-01-03 08:00,,PT_Normal,,,,,iWFqCGIHUU6EJLmcUeh0CQ,mb+jkI/ywU6UywP62LUheA,,,N,0,0,,,2013-11-05 11:09,2013-11-05 11:09,admin,admin,
569,102286,4512,26205,6590,0,N,N,N,CP_Drtn,TT_Task,DT_FixedDUR2,TK_NotStart,JF721.524,Shell Nozzles & Manholes,,1008,968,40,0,0,0,40,0,0,0,,,,2013-02-10 10:00,2013-02-14 10:00,,2012-10-23 15:00,2012-10-29 15:00,2012-10-23 15:00,2012-10-29 15:00,2012-10-23 15:00,2012-10-29 15:00,2013-02-10 10:00,2013-02-14 10:00,,PT_Normal,,,,,hhIuv8rLuE64VQCx8d/F2Q,bYPwWiI3GUaFTpFne1xHmA,,,N,0,0,,,2013-11-05 11:09,2013-11-05 11:09,admin,admin,
570,102287,4512,26205,6590,0,N,N,N,CP_Drtn,TT_Task,DT_FixedDUR2,TK_NotStart,JF721.525,"Platforms,Stairs & Handrails",,1200,1160,56,0,0,0,56,0,0,0,,,,2013-04-05 11:30,2013-04-11 10:00,,2012-11-28 07:00,2012-12-04 08:00,2012-11-28 07:00,2012-12-04 08:00,2012-11-28 07:00,2012-12-04 08:00,2013-04-05 11:30,2013-04-11 10:00,,PT_Normal,,,,,oZ2W6RpR2U6MQOxiPTIcCQ,dfbbgYeH70W47Yg9e8OhUw,,,N,0,0,,,2013-11-05 11:09,2013-11-05 11:09,admin,admin,
571,102288,4512,26205,6590,0,N,N,N,CP_Drtn,TT_Task,DT_FixedDUR2,TK_NotStart,JF721.526,Pipes & Fittings,,288,0,208,0,0,0,208,0,0,0,,,,2012-10-17 14:00,2012-11-10 17:00,,2012-09-16 16:00,2012-10-09 09:00,2012-09-16 16:00,2012-10-09 09:00,2012-09-16 16:00,2012-10-09 09:00,2012-10-17 14:00,2012-11-10 17:00,,PT_Normal,,,,,KmjDdnAfVk27XTER9Q0CMQ,kpaaWoNQ0Ue6jietlQ5Z5Q,,,N,0,0,,,2013-11-05 11:09,2013-11-05 11:09,admin,admin,
572,102289,4512,26205,6590,0,N,N,N,CP_Drtn,TT_Task,DT_FixedDUR2,TK_NotStart,JF721.527,Aluminum Dome Roof,,991.983333,951.983333,728.016667,0,0,0,728.016667,0,0,0,,,,2012-12-09 10:59,2013-02-24 16:00,,2012-08-22 14:00,2012-11-11 07:01,2012-08-22 14:00,2012-11-11 07:01,2012-08-22 14:00,2012-11-11 07:01,2012-12-09 10:59,2013-02-24 16:00,,PT_Normal,,,,,SZlpqfmb3kGFex1v/NwOng,fvBVTZnUAEe8LmzFstdm6w,,,N,0,0,,,2013-11-05 11:09,2013-11-05 11:09,admin,admin,
573,102290,4512,26205,6590,0,N,N,N,CP_Drtn,TT_Task,DT_FixedDUR2,TK_NotStart,JF721.528,Paint Material,,616,328,208,0,0,0,208,0,0,0,,,,2012-10-17 14:00,2012-11-10 17:00,,2012-08-09 08:00,2012-09-03 16:00,2012-08-09 08:00,2012-09-03 16:00,2012-08-09 08:00,2012-09-03 16:00,2012-10-17 14:00,2012-11-10 17:00,,PT_Normal,,,,,elGtFmiJYkyY6yIrDKUwMw,NMnPTBgk00ygxxX6Jhgwmg,,,N,0,0,,,2013-11-05 11:09,2013-11-05 11:09,admin,admin,
574,102291,4512,26206,6590,0,N,N,N,CP_Drtn,TT_Task,DT_FixedDUR2,TK_NotStart,JF721.480,PO Issued,,224,0,16,0,0,0,16,0,0,0,,,,2012-10-10 15:00,2012-10-12 13:30,,2012-09-16 16:00,2012-09-18 12:00,2012-09-16 16:00,2012-09-18 12:00,2012-09-16 16:00,2012-09-18 12:00,2012-10-10 15:00,2012-10-12 13:30,,PT_Normal,,,,,5tC4M9eHTUW8GOKOWd0J8Q,xMKajeOpB0i4h5bLtqRGTg,,,N,0,0,,,2013-11-05 11:09,2013-11-05 11:09,admin,admin,
575,102292,4512,26206,6590,0,N,N,N,CP_Drtn,TT_Task,DT_FixedDUR2,TK_NotStart,JF721.481,Ma'aden Site Delievery,,224,184,56,0,0,0,56,0,0,0,,,,2012-10-12 13:30,2012-10-18 12:00,,2012-09-18 12:00,2012-09-24 13:00,2012-09-18 12:00,2012-09-24 13:00,2012-09-18 12:00,2012-09-24 13:00,2012-10-12 13:30,2012-10-18 12:00,,PT_Normal,,,,,P9Pwwj02jkuZw8tV0koOXw,WxdmX0lSU0yS7+MyaW6J3A,,,N,0,0,,,2013-11-05 11:09,2013-11-05 11:09,admin,admin,
576,102293,4512,26207,6590,0,N,N,N,CP_Drtn,TT_FinMile,DT_FixedDrtn,TK_NotStart,4.5,"Material Requisition approval for Steel plates, Cathodic Protection, field instruments etc.",,288,0,0,0,0,0,0,0,0,0,,,,2012-08-30 11:00,2012-08-30 11:00,,2012-07-27 10:30,2012-07-27 10:30,2012-07-27 10:30,2012-07-27 10:30,2012-07-27 10:30,2012-07-27 10:30,2012-08-30 11:00,2012-08-30 11:00,,PT_Normal,,,,,By9sRNBcCEKG4ZhQcxLjmg,,,,N,0,0,,,2013-11-05 11:09,2013-11-05 11:09,admin,admin,
577,102294,4512,26208,6590,0,N,N,N,CP_Drtn,TT_FinMile,DT_FixedDrtn,TK_NotStart,4.6,Purchase Order placement for Major Materials,,991.983333,0,0,0,0,0,0,0,0,0,,,,2012-12-09 10:59,2012-12-09 10:59,,2012-08-22 14:00,2012-08-22 14:00,2012-08-22 14:00,2012-08-22 14:00,2012-08-22 14:00,2012-08-22 14:00,2012-12-09 10:59,2012-12-09 10:59,,PT_Normal,,,,,pLMKhdfGK0GfTOlHLOLgwA,,,,N,0,0,,,2013-11-05 11:09,2013-11-05 11:09,admin,admin,
578,102295,4512,26209,6590,0,N,N,N,CP_Drtn,TT_FinMile,DT_FixedDrtn,TK_NotStart,4.11,Complete Installation of Cathodic Protection,,40,0,0,0,0,0,0,0,0,0,,,,2013-07-07 13:00,2013-07-07 13:00,,2013-07-03 08:00,2013-07-03 08:00,2013-07-03 08:00,2013-07-03 08:00,2013-07-03 08:00,2013-07-03 08:00,2013-07-07 13:00,2013-07-07 13:00,,PT_Normal,,,,,Tv5G2hr1VkO7cj3PbhtIAQ,,,,N,0,0,,,2013-11-05 11:09,2013-11-05 11:09,admin,admin,
579,102296,4512,26210,6590,0,N,N,N,CP_Drtn,TT_FinMile,DT_FixedDrtn,TK_NotStart,4.12,Complete Installation for instruments,,40,0,0,0,0,0,0,0,0,0,,,,2013-07-26 11:30,2013-07-26 11:30,,2013-07-22 09:00,2013-07-22 09:00,2013-07-22 09:00,2013-07-22 09:00,2013-07-22 09:00,2013-07-22 09:00,2013-07-26 11:30,2013-07-26 11:30,,PT_Normal,,,,,8fAS9uL7lUCCixg44yLqAQ,,,,N,0,0,,,2013-11-05 11:09,2013-11-05 11:09,admin,admin,
580,102297,4512,26211,6590,0,N,N,N,CP_Drtn,TT_FinMile,DT_FixedDrtn,TK_NotStart,4.8,Supply of materials to Site,,288,248,0,0,0,0,0,0,0,0,,,,2012-11-10 17:00,2012-11-10 17:00,,2012-10-09 09:00,2012-10-09 09:00,2012-10-09 09:00,2012-10-09 09:00,2012-10-09 09:00,2012-10-09 09:00,2012-11-10 17:00,2012-11-10 17:00,,PT_Normal,,,,,WOFBANpAH0C8w9tf5oFjwg,,,,N,0,0,,,2013-11-05 11:09,2013-11-05 11:09,admin,admin,
581,102298,4512,26213,6590,0,N,N,N,CP_Drtn,TT_Task,DT_FixedDUR2,TK_NotStart,JF721.529,Rental For Workers & Engineers Accomodation with Facilities,6915,40,0,16,0,40,40,16,20,0,20,,,,2012-08-05 08:00,2012-08-06 14:00,,2012-07-31 13:00,2012-08-02 09:00,2012-07-31 13:00,2012-08-02 09:00,2012-07-31 13:00,2012-08-02 09:00,2012-08-05 08:00,2012-08-06 14:00,,PT_Normal,,,,,lCR4acukxEWj17a9rCzq1Q,HrSgeaSbv0CSiWrOgcgh6Q,,,N,0,0,,,2013-11-05 11:09,2013-11-05 11:09,admin,admin,
582,102299,4512,26213,6590,0,N,N,N,CP_Drtn,TT_Task,DT_FixedDUR2,TK_NotStart,JF721.531,Ma'aden Inspection & Approval for Portacabins,6915,40,0,8,0,20,20,8,0,0,0,,,,2012-10-08 11:00,2012-10-09 09:00,,2012-10-03 16:00,2012-10-04 14:00,2012-10-03 16:00,2012-10-04 14:00,2012-10-03 16:00,2012-10-04 14:00,2012-10-08 11:00,2012-10-09 09:00,,PT_Normal,,,,,g/FEkGuAt0m/3qZSzbmYlQ,gfOjc+CVD02J1vIWbNmX4Q,,,N,0,0,,,2013-11-05 11:09,2013-11-05 11:09,admin,admin,
583,102300,4512,26213,6590,0,N,N,N,CP_Drtn,TT_Task,DT_FixedDUR2,TK_NotStart,JF721.530,Complete Mobilize AZ Equipment to Site & Prepare the site fabrication yard,6951,40,0,552,0,4140,4140,552,2070,0,2070,,,,2012-08-06 14:00,2012-10-08 11:00,,2012-08-02 09:00,2012-10-03 16:00,2012-08-02 09:00,2012-10-03 16:00,2012-08-02 09:00,2012-10-03 16:00,2012-08-06 14:00,2012-10-08 11:00,,PT_Normal,,,,,AA1BoBVCr0ahsmzt6rSQJw,MMvSbrC2QkyGClDJyH1uJQ,,,N,0,0,,,2013-11-05 11:09,2013-11-05 11:09,admin,admin,
584,102301,4512,26214,6590,0,N,N,N,CP_Drtn,TT_Task,DT_FixedDUR2,TK_NotStart,JF721.532,Layout/Stake-out,6942,40,0,24,0,200,200,24,60,0,60,,,,2012-10-09 09:00,2012-10-11 13:00,,2012-10-04 14:00,2012-10-07 13:00,2012-10-04 14:00,2012-10-07 13:00,2012-10-04 14:00,2012-10-07 13:00,2012-10-09 09:00,2012-10-11 13:00,,PT_Normal,,,,,XB56zTeUxkO9vKDVDcv3Aw,zEeV7AYxDU6oxVE21A97rA,,,N,0,0,,,2013-11-05 11:09,2013-11-05 11:09,admin,admin,
585,102302,4512,26214,6590,0,N,N,N,CP_Drtn,TT_Task,DT_FixedDUR2,TK_NotStart,JF721.533,Excavation,6942,40,0,80,0,1080,1080,80,360,0,360,,,,2012-10-10 07:00,2012-10-18 12:00,,2012-10-06 07:00,2012-10-14 12:00,2012-10-06 07:00,2012-10-14 12:00,2012-10-06 07:00,2012-10-14 12:00,2012-10-10 07:00,2012-10-18 12:00,,PT_Normal,,,,,30NU4hHbTkeCex7FakkSSQ,A40lJUmBtky36sGaQyLSlg,,,N,0,0,,,2013-11-05 11:09,2013-11-05 11:09,admin,admin,
586,102303,4512,26214,6590,0,N,N,N,CP_Drtn,TT_Task,DT_FixedDUR2,TK_NotStart,JF721.534,SteelWorks/Formworks,6980,40,0,56,0,980,980,56,210,0,210,,,,2012-10-18 12:00,2012-10-24 13:00,,2012-10-14 12:00,2012-10-20 13:00,2012-10-14 12:00,2012-10-20 13:00,2012-10-14 12:00,2012-10-20 13:00,2012-10-18 12:00,2012-10-24 13:00,,PT_Normal,,,,,NXl4pSFlMU+tiyAZQdxWYA,OqdqJmCL+EKcmdEpK9P4sA,,,N,0,0,,,2013-11-05 11:09,2013-11-05 11:09,admin,admin,
587,102304,4512,26214,6590,0,N,N,N,CP_Drtn,TT_Task,DT_FixedDUR2,TK_NotStart,JF721.535,Soil Compaction,6965,40,0,48,0,900,900,48,240,0,240,,,,2012-10-24 13:00,2012-10-31 11:00,,2012-10-20 13:00,2012-10-25 11:00,2012-10-20 13:00,2012-10-25 11:00,2012-10-20 13:00,2012-10-25 11:00,2012-10-24 13:00,2012-10-31 11:00,,PT_Normal,,,,,d0rgPUpKDU6Z/remWPKbEw,Fw1ZJ+kPUUypXcJsWVdREg,,,N,0,0,,,2013-11-05 11:09,2013-11-05 11:09,admin,admin,
588,102305,4512,26215,6590,0,N,N,N,CP_Drtn,TT_Task,DT_FixedDUR2,TK_NotStart,JF721.540,Erect & Weld Annular Plates,6942,40,0,120,0,1540,1540,120,630,0,630,,,,2012-11-11 07:00,2012-11-23 14:30,,2012-11-06 12:00,2012-11-19 12:00,2012-11-06 12:00,2012-11-19 12:00,2012-11-06 12:00,2012-11-19 12:00,2012-11-11 07:00,2012-11-23 14:30,,PT_Normal,,,,,XpgsZSW+s0Cxzfv6YUX+Jw,wAcsRKLcHkq/L3INr7lwpw,,,N,0,0,,,2013-11-05 11:09,2013-11-05 11:09,admin,admin,
589,102306,4512,26215,6590,0,N,N,N,CP_Drtn,TT_Task,DT_FixedDUR2,TK_NotStart,JF721.541,Erect & Tack Bottom Plates,6951,40,0,160,0,1380,1380,160,600,0,600,,,,2012-11-24 07:00,2012-12-10 17:00,,2012-11-19 12:00,2012-12-06 12:00,2012-11-19 12:00,2012-12-06 12:00,2012-11-19 12:00,2012-12-06 12:00,2012-11-24 07:00,2012-12-10 17:00,,PT_Normal,,,,,YSCEcuZ6mkWZsQg7qoJeYw,110SImtgt0aH/kqL4icYqg,,,N,0,0,,,2013-11-05 11:09,2013-11-05 11:09,admin,admin,
590,102307,4512,26215,6590,0,N,N,N,CP_Drtn,TT_Task,DT_FixedDUR2,TK_NotStart,JF721.542,Welding of Bottom Plates,6968,40,0,200,0,1610,1610,200,560,0,560,,,,2012-12-11 07:00,2013-01-01 12:00,,2012-12-06 12:00,2012-12-27 17:00,2012-12-06 12:00,2012-12-27 17:00,2012-12-06 12:00,2012-12-27 17:00,2012-12-11 07:00,2013-01-01 12:00,,PT_Normal,,,,,nCMvFLOhKUi22MFwW0SB8Q,zWD8t9dWWk6r42mM7S9ODg,,,N,0,0,,,2013-11-05 11:09,2013-11-05 11:09,admin,admin,
591,102308,4512,26215,6590,0,N,N,N,CP_Drtn,TT_Task,DT_FixedDUR2,TK_NotStart,JF721.543,Visual Inspection & Cleaning,6935,40,0,8,0,220,220,8,20,0,20,,,,2013-01-01 12:00,2013-01-02 10:00,,2012-12-28 09:30,2012-12-29 10:00,2012-12-28 09:30,2012-12-29 10:00,2012-12-28 09:30,2012-12-29 10:00,2013-01-01 12:00,2013-01-02 10:00,,PT_Normal,,,,,OschH9R5IEKLGbFnu7C++w,stTKlzl250O8vdnn2608yQ,,,N,0,0,,,2013-11-05 11:09,2013-11-05 11:09,admin,admin,
592,102309,4512,26215,6590,0,N,N,N,CP_Drtn,TT_Task,DT_FixedDUR2,TK_NotStart,JF721.544,Carry Out NDT & Vaccuum Box Test,6935,40,0,16,0,480,480,16,40,0,40,,,,2013-01-02 10:00,2013-01-03 16:00,,2012-12-29 10:00,2012-12-30 16:00,2012-12-29 10:00,2012-12-30 16:00,2012-12-29 10:00,2012-12-30 16:00,2013-01-02 10:00,2013-01-03 16:00,,PT_Normal,,,,,rgm0w0zr1E+xT6i7Zc6m+A,TJThdccDb02ykkVKXx6c/Q,,,N,0,0,,,2013-11-05 11:09,2013-11-05 11:09,admin,admin,
593,102310,4512,26216,6590,0,N,N,N,CP_Drtn,TT_Task,DT_FixedDUR2,TK_NotStart,JF721.545,Prepare Shell Course # 1 for Erection,6951,40,0,24,0,240,240,24,100,0,100,,,,2013-01-03 08:00,2013-01-05 17:00,,2012-12-30 08:00,2013-01-01 12:00,2012-12-30 08:00,2013-01-01 12:00,2012-12-30 08:00,2013-01-01 12:00,2013-01-03 08:00,2013-01-05 17:00,,PT_Normal,,,,,IBPUO99HjES8ANUsnndSQQ,XgtPMJGhUk+gdCHLmZFEXA,,,N,0,0,,,2013-11-05 11:09,2013-11-05 11:09,admin,admin,
594,102311,4512,26216,6590,0,N,N,N,CP_Drtn,TT_Task,DT_FixedDUR2,TK_NotStart,JF721.546,Erect & Tack Shell Course # 1,6951,40,0,40,0,500,500,40,200,0,200,,,,2013-01-06 07:00,2013-01-09 17:00,,2013-01-01 12:00,2013-01-05 17:00,2013-01-01 12:00,2013-01-05 17:00,2013-01-01 12:00,2013-01-05 17:00,2013-01-06 07:00,2013-01-09 17:00,,PT_Normal,,,,,5fYnSJSbXUOhx5/opp0+tg,lYIICyevK0KWhlRfcxgE9Q,,,N,0,0,,,2013-11-05 11:09,2013-11-05 11:09,admin,admin,
595,102312,4512,26216,6590,0,N,N,N,CP_Drtn,TT_Task,DT_FixedDUR2,TK_NotStart,JF721.547,Weld Outer Vertical Seam,6942,40,0,32,0,500,500,32,200,0,200,,,,2013-01-06 15:00,2013-01-09 17:00,,2013-01-02 10:00,2013-01-05 17:00,2013-01-02 10:00,2013-01-05 17:00,2013-01-02 10:00,2013-01-05 17:00,2013-01-06 15:00,2013-01-09 17:00,,PT_Normal,,,,,rGtrfbhER06vGrWRjqapyg,QZ+VUGcZFEqSWYekOyWirA,,,N,0,0,,,2013-11-05 11:09,2013-11-05 11:09,admin,admin,
596,102313,4512,26216,6590,0,N,N,N,CP_Drtn,TT_Task,DT_FixedDUR2,TK_NotStart,JF721.548,Backgouge & NDT Inside Vertical Seam,6965,40,0,32,0,500,500,32,180,0,180,,,,2013-01-07 13:00,2013-01-10 15:00,,2013-01-03 08:00,2013-01-06 15:00,2013-01-03 08:00,2013-01-06 15:00,2013-01-03 08:00,2013-01-06 15:00,2013-01-07 13:00,2013-01-10 15:00,,PT_Normal,,,,,9svCqvqXTkyvCbEZhnCbcg,Oquglvz0g0+sTQlwVp+Mfg,,,N,0,0,,,2013-11-05 11:09,2013-11-05 11:09,admin,admin,
597,102314,4512,26216,6590,0,N,N,N,CP_Drtn,TT_Task,DT_FixedDUR2,TK_NotStart,JF721.549,Weld Inside Vertical Seam,6968,40,0,32,0,500,500,32,220,0,220,,,,2013-01-08 11:00,2013-01-12 08:00,,2013-01-03 16:00,2013-01-07 13:00,2013-01-03 16:00,2013-01-07 13:00,2013-01-03 16:00,2013-01-07 13:00,2013-01-08 11:00,2013-01-12 08:00,,PT_Normal,,,,,D1phn+rRVkm1fIrQOQBLPg,bNgvLtxoF0WK2nioT03ing,,,N,0,0,,,2013-11-05 11:09,2013-11-05 11:09,admin,admin,
598,102315,4512,26217,6590,0,N,N,N,CP_Drtn,TT_Task,DT_FixedDUR2,TK_NotStart,JF721.550,Prepare Shell Course # 2 for Erection,6951,40,0,24,0,270,270,24,120,0,120,,,,2013-01-10 07:00,2013-01-12 16:00,,2013-01-06 07:00,2013-01-08 11:00,2013-01-06 07:00,2013-01-08 11:00,2013-01-06 07:00,2013-01-08 11:00,2013-01-10 07:00,2013-01-12 16:00,,PT_Normal,,,,,Ks196EUOoEmZpJlzBhgmWQ,znGT1AiRzUexYVr8dhKCng,,,N,0,0,,,2013-11-05 11:09,2013-11-05 11:09,admin,admin,
599,102316,4512,26217,6590,0,N,N,N,CP_Drtn,TT_Task,DT_FixedDUR2,TK_NotStart,JF721.551,Erect & Tack Shell Course # 2,6951,40,0,24,0,520,520,24,240,0,240,,,,2013-01-12 16:00,2013-01-15 10:00,,2013-01-08 11:00,2013-01-10 15:00,2013-01-08 11:00,2013-01-10 15:00,2013-01-08 11:00,2013-01-10 15:00,2013-01-12 16:00,2013-01-15 10:00,,PT_Normal,,,,,WgiVqLajzUSeGZwU6QZgSA,S0FZWc0Rh0uCp9rpJu0UFw,,,N,0,0,,,2013-11-05 11:09,2013-11-05 11:09,admin,admin,
600,102317,4512,26217,6590,0,N,N,N,CP_Drtn,TT_Task,DT_FixedDUR2,TK_NotStart,JF721.552,Weld Outer Vertical Seam,6935,40,0,40,0,750,750,40,300,0,300,,,,2013-01-13 14:00,2013-01-17 14:00,,2013-01-09 09:00,2013-01-13 14:00,2013-01-09 09:00,2013-01-13 14:00,2013-01-09 09:00,2013-01-13 14:00,2013-01-13 14:00,2013-01-17 14:00,,PT_Normal,,,,,DODqhyuVLkyX9USpYtFOjw,02x2RGlq8UyrSQ1smyHvXA,,,N,0,0,,,2013-11-05 11:09,2013-11-05 11:09,admin,admin,
601,102318,4512,26217,6590,0,N,N,N,CP_Drtn,TT_Task,DT_FixedDUR2,TK_NotStart,JF721.553,Backgouge & NDT Inside Vertical Seam,6964,40,0,32,0,540,540,32,240,0,240,,,,2013-01-14 12:00,2013-01-17 14:00,,2013-01-10 07:00,2013-01-13 14:00,2013-01-10 07:00,2013-01-13 14:00,2013-01-10 07:00,2013-01-13 14:00,2013-01-14 12:00,2013-01-17 14:00,,PT_Normal,,,,,SI0l9W2kjESEQYxoaRAUQQ,OTH2MBl8/0+b90QwPRl6HA,,,N,0,0,,,2013-11-05 11:09,2013-11-05 11:09,admin,admin,
602,102319,4512,26217,6590,0,N,N,N,CP_Drtn,TT_Task,DT_FixedDUR2,TK_NotStart,JF721.554,Weld Inside Vertical Seam,6935,40,0,32,0,460,460,32,240,0,240,,,,2013-01-15 10:00,2013-01-18 14:30,,2013-01-10 15:00,2013-01-14 12:00,2013-01-10 15:00,2013-01-14 12:00,2013-01-10 15:00,2013-01-14 12:00,2013-01-15 10:00,2013-01-18 14:30,,PT_Normal,,,,,IkLs+kratkyAZKHAjY/Ukg,RfSppuVpEkauvhzPvVlSOQ,,,N,0,0,,,2013-11-05 11:09,2013-11-05 11:09,admin,admin,
603,102320,4512,26217,6590,0,N,N,N,CP_Drtn,TT_Task,DT_FixedDUR2,TK_NotStart,JF721.555,"""""Fit & Tack Horizontal Seam between Shell Course # 1 & 2""""",6942,40,0,32,0,400,400,32,240,0,240,,,,2013-01-16 08:00,2013-01-19 15:00,,2013-01-12 08:00,2013-01-15 10:00,2013-01-12 08:00,2013-01-15 10:00,2013-01-12 08:00,2013-01-15 10:00,2013-01-16 08:00,2013-01-19 15:00,,PT_Normal,,,,,5DohgEa5/0+wCRMa1irKnQ,i+siZMRFOEWWPhpzGgTm/A,,,N,0,0,,,2013-11-05 11:09,2013-11-05 11:09,admin,admin,
604,102321,4512,26217,6590,0,N,N,N,CP_Drtn,TT_Task,DT_FixedDUR2,TK_NotStart,JF721.556,"""""Weld Outer Horizontal Seam between Shell Course # 1 & 2""""",6942,40,0,48,0,1040,1040,48,480,0,480,,,,2013-01-16 16:00,2013-01-22 09:00,,2013-01-12 16:00,2013-01-17 14:00,2013-01-12 16:00,2013-01-17 14:00,2013-01-12 16:00,2013-01-17 14:00,2013-01-16 16:00,2013-01-22 09:00,,PT_Normal,,,,,NEQmOprvSkWY0Gi/hoSgcw,nmGtj9Je2EqNDoqQVv1N1g,,,N,0,0,,,2013-11-05 11:09,2013-11-05 11:09,admin,admin,
605,102322,4512,26217,6590,0,N,N,N,CP_Drtn,TT_Task,DT_FixedDUR2,TK_NotStart,JF721.557,"""""Backgouge & NDT Inside Horizontal Seam between Shell Course# 1 & 2""""",6935,40,0,32,0,520,520,32,240,0,240,,,,2013-01-17 14:00,2013-01-21 11:00,,2013-01-13 14:00,2013-01-16 16:00,2013-01-13 14:00,2013-01-16 16:00,2013-01-13 14:00,2013-01-16 16:00,2013-01-17 14:00,2013-01-21 11:00,,PT_Normal,,,,,TgL1zGMLdEq84MCVRIY+Aw,sy+IrWUhXkughQFX+iL5XA,,,N,0,0,,,2013-11-05 11:09,2013-11-05 11:09,admin,admin,
606,102323,4512,26217,6590,0,N,N,N,CP_Drtn,TT_Task,DT_FixedDUR2,TK_NotStart,JF721.558,"Weld Inner Horizontal Seam between Shell Course # 1 & 2""""",6935,40,0,32,0,540,540,32,240,0,240,,,,2013-01-19 07:00,2013-01-22 09:00,,2013-01-14 12:00,2013-01-17 14:00,2013-01-14 12:00,2013-01-17 14:00,2013-01-14 12:00,2013-01-17 14:00,2013-01-19 07:00,2013-01-22 09:00,,PT_Normal,,,,,NbMPr8F8pUaxEIL9EgT/aA,V2cmtQD/9kqksXaVitT7Pg,,,N,0,0,,,2013-11-05 11:09,2013-11-05 11:09,admin,admin,
607,102324,4512,26218,6590,0,N,N,N,CP_Drtn,TT_Task,DT_FixedDUR2,TK_NotStart,JF721.559,Prepare Shell Course # 3 for Erection,6942,40,0,24,0,270,270,24,110,0,110,,,,2013-01-19 07:00,2013-01-21 11:00,,2013-01-14 12:00,2013-01-16 16:00,2013-01-14 12:00,2013-01-16 16:00,2013-01-14 12:00,2013-01-16 16:00,2013-01-19 07:00,2013-01-21 11:00,,PT_Normal,,,,,1CPV1yPlx0+gD6xP2+71Pg,0dF8XEJAR0um2y0CtZrHCA,,,N,0,0,,,2013-11-05 11:09,2013-11-05 11:09,admin,admin,
608,102325,4512,26218,6590,0,N,N,N,CP_Drtn,TT_Task,DT_FixedDUR2,TK_NotStart,JF721.560,Erect & Tack Shell Course # 3,6951,40,0,32,0,540,540,32,200,0,200,,,,2013-01-21 11:00,2013-01-24 13:00,,2013-01-16 16:00,2013-01-20 13:00,2013-01-16 16:00,2013-01-20 13:00,2013-01-16 16:00,2013-01-20 13:00,2013-01-21 11:00,2013-01-24 13:00,,PT_Normal,,,,,jXEoCDvSrk2LSME9ayGEnw,zAQOLeothkewiBEgPtyU3w,,,N,0,0,,,2013-11-05 11:09,2013-11-05 11:09,admin,admin,
609,102326,4512,26218,6590,0,N,N,N,CP_Drtn,TT_Task,DT_FixedDUR2,TK_NotStart,JF721.561,Weld Outer Vertical Seam,6965,40,0,40,0,780,780,40,360,0,360,,,,2013-01-22 09:00,2013-01-26 14:00,,2013-01-17 14:00,2013-01-22 09:00,2013-01-17 14:00,2013-01-22 09:00,2013-01-17 14:00,2013-01-22 09:00,2013-01-22 09:00,2013-01-26 14:00,,PT_Normal,,,,,Rb6GH3+fcU+OAaXOmKu+9A,vwMCXD/taEyiVqs1zuTkSg,,,N,0,0,,,2013-11-05 11:09,2013-11-05 11:09,admin,admin,
610,102327,4512,26218,6590,0,N,N,N,CP_Drtn,TT_Task,DT_FixedDUR2,TK_NotStart,JF721.562,Backgouge & NDT Inside Vertical Seam,6942,40,0,32,0,540,540,32,240,0,240,,,,2013-01-23 07:00,2013-01-26 14:00,,2013-01-19 07:00,2013-01-22 09:00,2013-01-19 07:00,2013-01-22 09:00,2013-01-19 07:00,2013-01-22 09:00,2013-01-23 07:00,2013-01-26 14:00,,PT_Normal,,,,,L6WaoDUHzkSGBN8wikt6WA,FkRXA7HHrUuzrqNxnnIPWQ,,,N,0,0,,,2013-11-05 11:09,2013-11-05 11:09,admin,admin,
611,102328,4512,26218,6590,0,N,N,N,CP_Drtn,TT_Task,DT_FixedDUR2,TK_NotStart,JF721.563,Weld Inside Vertical Seam,6942,40,0,32,0,540,540,32,240,0,240,,,,2013-01-23 15:00,2013-01-27 11:00,,2013-01-19 15:00,2013-01-22 17:00,2013-01-19 15:00,2013-01-22 17:00,2013-01-19 15:00,2013-01-22 17:00,2013-01-23 15:00,2013-01-27 11:00,,PT_Normal,,,,,EkSzFBnA6UqI18chyjY/JQ,Z68p+vy+CEihIDlquyT8Bw,,,N,0,0,,,2013-11-05 11:09,2013-11-05 11:09,admin,admin,
612,102329,4512,26218,6590,0,N,N,N,CP_Drtn,TT_Task,DT_FixedDUR2,TK_NotStart,JF721.564,"""""Fit & Tack Horizontal Seam between Shell Course # 2 & 3""""",6942,40,0,32,0,540,540,32,240,0,240,,,,2013-01-24 13:00,2013-01-27 19:00,,2013-01-20 13:00,2013-01-23 15:00,2013-01-20 13:00,2013-01-23 15:00,2013-01-20 13:00,2013-01-23 15:00,2013-01-24 13:00,2013-01-27 19:00,,PT_Normal,,,,,ZdakqEXIHki9a7GNtTvFKw,yO4QpAPPZUm/ZuKMLUlwxA,,,N,0,0,,,2013-11-05 11:09,2013-11-05 11:09,admin,admin,
613,102330,4512,26218,6590,0,N,N,N,CP_Drtn,TT_Task,DT_FixedDUR2,TK_NotStart,JF721.565,"""""Weld Outer Horizontal Seam between Shell Course # 2 & 3""""",6942,40,0,48,0,1040,1040,48,480,0,480,,,,2013-01-25 13:30,2013-01-29 16:00,,2013-01-21 11:00,2013-01-26 14:00,2013-01-21 11:00,2013-01-26 14:00,2013-01-21 11:00,2013-01-26 14:00,2013-01-25 13:30,2013-01-29 16:00,,PT_Normal,,,,,RptsGsNuvkKxYG/rfdsU2g,FqAnNlhx/Uaj83WHY9IKxg,,,N,0,0,,,2013-11-05 11:09,2013-11-05 11:09,admin,admin,
614,102331,4512,26218,6590,0,N,N,N,CP_Drtn,TT_Task,DT_FixedDUR2,TK_NotStart,JF721.566,"""""Backgouge & NDT Inside Horizontal Seam between Shell Course# 2 & 3""""",6942,40,0,32,0,500,500,32,220,0,220,,,,2013-01-26 14:00,2013-01-29 08:00,,2013-01-22 09:00,2013-01-25 13:30,2013-01-22 09:00,2013-01-25 13:30,2013-01-22 09:00,2013-01-25 13:30,2013-01-26 14:00,2013-01-29 08:00,,PT_Normal,,,,,99Hn+znuO0e6WJnvuzGEGQ,9YqBeljKO0qZKYRZnZ9kzA,,,N,0,0,,,2013-11-05 11:09,2013-11-05 11:09,admin,admin,
615,102332,4512,26218,6590,0,N,N,N,CP_Drtn,TT_Task,DT_FixedDUR2,TK_NotStart,JF721.567,"Weld Inner Horizontal Seam between Shell Course # 2 & 3""""",6942,40,0,32,0,540,540,32,240,0,240,,,,2013-01-27 11:00,2013-01-29 16:00,,2013-01-23 07:00,2013-01-26 14:00,2013-01-23 07:00,2013-01-26 14:00,2013-01-23 07:00,2013-01-26 14:00,2013-01-27 11:00,2013-01-29 16:00,,PT_Normal,,,,,KJldZhmq50Cw7EEoJcS8ew,AYzaOzcC+0SVspGFh3omtg,,,N,0,0,,,2013-11-05 11:09,2013-11-05 11:09,admin,admin,
616,102333,4512,26219,6590,0,N,N,N,CP_Drtn,TT_Task,DT_FixedDUR2,TK_NotStart,JF721.568,Prepare Shell Course # 4 for Erection,6942,40,0,24,0,270,270,24,120,0,120,,,,2013-01-29 16:00,2013-02-01 12:30,,2013-01-26 14:00,2013-01-28 10:00,2013-01-26 14:00,2013-01-28 10:00,2013-01-26 14:00,2013-01-28 10:00,2013-01-29 16:00,2013-02-01 12:30,,PT_Normal,,,,,LGOdPcfGOUapFBHSfiBaCA,Bh8dUtSXV0e+Ksnyty3PvQ,,,N,0,0,,,2013-11-05 11:09,2013-11-05 11:09,admin,admin,
617,102334,4512,26219,6590,0,N,N,N,CP_Drtn,TT_Task,DT_FixedDUR2,TK_NotStart,JF721.569,Erect & Tack Shell Course # 4,6965,40,0,32,0,520,520,32,240,0,240,,,,2013-02-01 12:30,2013-02-04 17:00,,2013-01-28 10:00,2013-01-31 12:00,2013-01-28 10:00,2013-01-31 12:00,2013-01-28 10:00,2013-01-31 12:00,2013-02-01 12:30,2013-02-04 17:00,,PT_Normal,,,,,jqwbtCVZp02RPMOf0ocsmw,FnpgCCzPpk6P25YAzjb7FA,,,N,0,0,,,2013-11-05 11:09,2013-11-05 11:09,admin,admin,
618,102335,4512,26219,6590,0,N,N,N,CP_Drtn,TT_Task,DT_FixedDUR2,TK_NotStart,JF721.570,Weld Outer Vertical Seam,6942,40,0,40,0,780,780,40,360,0,360,,,,2013-02-02 13:00,2013-02-06 13:00,,2013-01-29 08:00,2013-02-02 13:00,2013-01-29 08:00,2013-02-02 13:00,2013-01-29 08:00,2013-02-02 13:00,2013-02-02 13:00,2013-02-06 13:00,,PT_Normal,,,,,bywGyXGys0u+McXdYZxbhQ,5cVgI51C00+1j2h27EgbEw,,,N,0,0,,,2013-11-05 11:09,2013-11-05 11:09,admin,admin,
619,102336,4512,26219,6590,0,N,N,N,CP_Drtn,TT_Task,DT_FixedDUR2,TK_NotStart,JF721.571,Backgouge & NDT Inside Vertical Seam,6942,40,0,32,0,540,540,32,240,0,240,,,,2013-02-03 11:00,2013-02-06 13:00,,2013-01-29 16:00,2013-02-02 13:00,2013-01-29 16:00,2013-02-02 13:00,2013-01-29 16:00,2013-02-02 13:00,2013-02-03 11:00,2013-02-06 13:00,,PT_Normal,,,,,iHME7ThFw0yDn3i+6E3iLA,oNcenL9t7kmxM4cI6cnKHA,,,N,0,0,,,2013-11-05 11:09,2013-11-05 11:09,admin,admin,
620,102337,4512,26219,6590,0,N,N,N,CP_Drtn,TT_Task,DT_FixedDUR2,TK_NotStart,JF721.572,Weld Inside Vertical Seam,6935,40,0,32,0,520,520,32,220,0,220,,,,2013-02-04 09:00,2013-02-07 11:00,,2013-01-30 14:00,2013-02-03 11:00,2013-01-30 14:00,2013-02-03 11:00,2013-01-30 14:00,2013-02-03 11:00,2013-02-04 09:00,2013-02-07 11:00,,PT_Normal,,,,,b8oYdDwqf0m61yN+CZzGEg,AOO+KXYiykWoBvXrHLTISg,,,N,0,0,,,2013-11-05 11:09,2013-11-05 11:09,admin,admin,
621,102338,4512,26219,6590,0,N,N,N,CP_Drtn,TT_Task,DT_FixedDUR2,TK_NotStart,JF721.573,"""""Fit & Tack Horizontal Seam between Shell Course # 3 & 4""""",6942,40,0,32,0,520,520,32,240,0,240,,,,2013-02-05 07:00,2013-02-08 11:30,,2013-01-31 12:00,2013-02-04 09:00,2013-01-31 12:00,2013-02-04 09:00,2013-01-31 12:00,2013-02-04 09:00,2013-02-05 07:00,2013-02-08 11:30,,PT_Normal,,,,,zt/hBZmNtkuoySqKShHD8Q,f+uNhvTdY0W8iTmTyN0P+Q,,,N,0,0,,,2013-11-05 11:09,2013-11-05 11:09,admin,admin,
622,102339,4512,26219,6590,0,N,N,N,CP_Drtn,TT_Task,DT_FixedDUR2,TK_NotStart,JF721.574,Weld Outer Horizontal Seam between Shell Course # 3 & 4,6942,40,0,48,0,1040,1040,48,480,0,480,,,,2013-02-05 15:00,2013-02-11 08:00,,2013-02-01 12:30,2013-02-06 13:00,2013-02-01 12:30,2013-02-06 13:00,2013-02-01 12:30,2013-02-06 13:00,2013-02-05 15:00,2013-02-11 08:00,,PT_Normal,,,,,qENDbSDdNEG289Q+RH2G/g,a4866ZCB9k6LY3zXWAxauA,,,N,0,0,,,2013-11-05 11:09,2013-11-05 11:09,admin,admin,
623,102340,4512,26219,6590,0,N,N,N,CP_Drtn,TT_Task,DT_FixedDUR2,TK_NotStart,JF721.575,"""""Backgouge & NDT Inside Horizontal Seam between Shell Course# 3 & 4""""",6942,40,0,32,0,520,520,32,240,0,240,,,,2013-02-06 13:00,2013-02-10 10:00,,2013-02-02 13:00,2013-02-05 15:00,2013-02-02 13:00,2013-02-05 15:00,2013-02-02 13:00,2013-02-05 15:00,2013-02-06 13:00,2013-02-10 10:00,,PT_Normal,,,,,SoazNWSn8kuHw3pdLqHUtA,oDIcQgrhIE2BT2X6ZhNrdw,,,N,0,0,,,2013-11-05 11:09,2013-11-05 11:09,admin,admin,
624,102341,4512,26219,6590,0,N,N,N,CP_Drtn,TT_Task,DT_FixedDUR2,TK_NotStart,JF721.576,"Weld Inner Horizontal Seam between Shell Course # 3 & 4""""",6942,40,0,32,0,540,540,32,240,0,240,,,,2013-02-07 11:00,2013-02-11 08:00,,2013-02-03 11:00,2013-02-06 13:00,2013-02-03 11:00,2013-02-06 13:00,2013-02-03 11:00,2013-02-06 13:00,2013-02-07 11:00,2013-02-11 08:00,,PT_Normal,,,,,6xWfiEDAVEympbS4hQzTGw,IlZcypqrkkiT7vWvdYTU7Q,,,N,0,0,,,2013-11-05 11:09,2013-11-05 11:09,admin,admin,
625,102342,4512,26219,6590,0,N,N,N,CP_Drtn,TT_Task,DT_FixedDUR2,TK_NotStart,JF721.577,"Fit, Weld Shell Course # 1 Annular Plate & Oil Test",6964,216,176,64,0,1500,1500,64,720,0,720,,,,2013-01-29 16:00,2013-02-05 15:00,,2013-01-07 13:00,2013-01-14 12:00,2013-01-07 13:00,2013-01-14 12:00,2013-01-07 13:00,2013-01-14 12:00,2013-01-29 16:00,2013-02-05 15:00,,PT_Normal,,,,,m9oULxKNSESCt9aQDyOyeQ,Hd3Cw6x4qkutEzo1wLhJHQ,,,N,0,0,,,2013-11-05 11:09,2013-11-05 11:09,admin,admin,
626,102343,4512,26220,6590,0,N,N,N,CP_Drtn,TT_Task,DT_FixedDUR2,TK_NotStart,JF721.578,Erect & Tack Curve Angle,6942,40,0,32,0,520,520,32,240,0,240,,,,2013-02-11 08:00,2013-02-14 10:00,,2013-02-06 13:00,2013-02-10 10:00,2013-02-06 13:00,2013-02-10 10:00,2013-02-06 13:00,2013-02-10 10:00,2013-02-11 08:00,2013-02-14 10:00,,PT_Normal,,,,,+tJSxHSWRkWWGJZoTyGv7A,4LEEoOCuY0O9LxelhKylNA,,,N,0,0,,,2013-11-05 11:09,2013-11-05 11:09,admin,admin,
627,102344,4512,26220,6590,0,N,N,N,CP_Drtn,TT_Task,DT_FixedDUR2,TK_NotStart,JF721.579,Weld Curve Angle,6942,40,0,48,0,920,920,48,360,0,360,,,,2013-02-14 10:00,2013-02-19 13:00,,2013-02-10 10:00,2013-02-15 10:30,2013-02-10 10:00,2013-02-15 10:30,2013-02-10 10:00,2013-02-15 10:30,2013-02-14 10:00,2013-02-19 13:00,,PT_Normal,,,,,SZ8pWJFPjUeRlEAsr7FJig,mDvr2ryoH02BSTFTlZLUXg,,,N,0,0,,,2013-11-05 11:09,2013-11-05 11:09,admin,admin,
628,102345,4512,26221,6590,0,N,N,N,CP_Drtn,TT_Task,DT_FixedDUR2,TK_NotStart,JF721.580,MArk & Cut Holes,6964,40,0,40,0,660,660,40,270,0,270,,,,2013-02-14 10:00,2013-02-18 15:00,,2013-02-10 10:00,2013-02-14 10:00,2013-02-10 10:00,2013-02-14 10:00,2013-02-10 10:00,2013-02-14 10:00,2013-02-14 10:00,2013-02-18 15:00,,PT_Normal,,,,,fq+sh3RbS0CRPcc4t41EVw,KIGGf/WnD0ed22oKzp2sxw,,,N,0,0,,,2013-11-05 11:09,2013-11-05 11:09,admin,admin,
629,102346,4512,26221,6590,0,N,N,N,CP_Drtn,TT_Task,DT_FixedDUR2,TK_NotStart,JF721.581,"Fit & Tack Manholes ,Nozzles on Shell",6958,40,0,32,0,440,440,32,140,0,140,,,,2013-02-15 10:30,2013-02-18 15:00,,2013-02-11 08:00,2013-02-14 10:00,2013-02-11 08:00,2013-02-14 10:00,2013-02-11 08:00,2013-02-14 10:00,2013-02-15 10:30,2013-02-18 15:00,,PT_Normal,,,,,r65E3t3gdkuV3+fAI5Z/Ng,rBcnUlW/60y/LAaEBzsSMw,,,N,0,0,,,2013-11-05 11:09,2013-11-05 11:09,admin,admin,
630,102347,4512,26221,6590,0,N,N,N,CP_Drtn,TT_Task,DT_FixedDUR2,TK_NotStart,JF721.582,Weld MAnholes & Nozzles on shell,6968,40,0,56,0,1100,1100,56,400,0,400,,,,2013-02-16 11:00,2013-02-21 17:00,,2013-02-11 16:00,2013-02-17 17:00,2013-02-11 16:00,2013-02-17 17:00,2013-02-11 16:00,2013-02-17 17:00,2013-02-16 11:00,2013-02-21 17:00,,PT_Normal,,,,,a1idx+P2V0yetfpZIIga5g,0KCSGwJNKU+tT+/YmtgeGA,,,N,0,0,,,2013-11-05 11:09,2013-11-05 11:09,admin,admin,
631,102348,4512,26221,6590,0,N,N,N,CP_Drtn,TT_Task,DT_FixedDUR2,TK_NotStart,JF721.583,NDT on Manholes & Nozzles on shell,6966,40,0,24,0,220,220,24,80,0,80,,,,2013-02-22 09:30,2013-02-24 16:00,,2013-02-18 07:00,2013-02-20 11:00,2013-02-18 07:00,2013-02-20 11:00,2013-02-18 07:00,2013-02-20 11:00,2013-02-22 09:30,2013-02-24 16:00,,PT_Normal,,,,,yywU2Dk88Um/E9jxb3FwPg,8EilY1U3706EfnCqsOoftw,,,N,0,0,,,2013-11-05 11:09,2013-11-05 11:09,admin,admin,
632,102349,4512,26222,6590,0,N,N,N,CP_Drtn,TT_Task,DT_FixedDUR2,TK_NotStart,JF721.584,Prepare Tank for Roof Contruction,6914,40,0,32,0,460,460,32,140,0,140,,,,2013-02-24 16:00,2013-02-28 08:00,,2013-02-20 11:00,2013-02-24 08:00,2013-02-20 11:00,2013-02-24 08:00,2013-02-20 11:00,2013-02-24 08:00,2013-02-24 16:00,2013-02-28 08:00,,PT_Normal,,,,,ADkJ9HtjdUCCE8eGtn0sJQ,lRS00tchZkqxfqnwTzxvGA,,,N,0,0,,,2013-11-05 11:09,2013-11-05 11:09,admin,admin,
633,102350,4512,26222,6590,0,N,N,N,CP_Drtn,TT_Task,DT_FixedDUR2,TK_NotStart,JF721.585,Install Shoe Support Structure on Shell,6964,40,0,64,0,1400,1400,64,420,0,420,,,,2013-02-28 08:00,2013-03-06 17:00,,2013-02-24 08:00,2013-03-02 17:00,2013-02-24 08:00,2013-03-02 17:00,2013-02-24 08:00,2013-03-02 17:00,2013-02-28 08:00,2013-03-06 17:00,,PT_Normal,,,,,3GnQo/HGuEW9irArrjbCGg,PbQ/co29dU+izHYm3twr6w,,,N,0,0,,,2013-11-05 11:09,2013-11-05 11:09,admin,admin,
634,102351,4512,26222,6590,0,N,N,N,CP_Drtn,TT_Task,DT_FixedDUR2,TK_NotStart,JF721.586,Install / Assemble Roof Rafters,6951,40,0,160,0,4400,4400,160,1600,0,1600,,,,2013-03-07 07:00,2013-03-24 12:00,,2013-03-03 07:00,2013-03-19 17:00,2013-03-03 07:00,2013-03-19 17:00,2013-03-03 07:00,2013-03-19 17:00,2013-03-07 07:00,2013-03-24 12:00,,PT_Normal,,,,,mcA9KamzMEqGqi1Vdi+3xA,iIFBqAUwnkSEFCiOSVgkJQ,,,N,0,0,,,2013-11-05 11:09,2013-11-05 11:09,admin,admin,
635,102352,4512,26222,6590,0,N,N,N,CP_Drtn,TT_Task,DT_FixedDUR2,TK_NotStart,JF721.587,Installation of Roof Plates,6914,40,0,120,0,3600,3600,120,1050,0,1050,,,,2013-03-24 12:00,2013-04-06 12:00,,2013-03-20 07:00,2013-04-01 17:00,2013-03-20 07:00,2013-04-01 17:00,2013-03-20 07:00,2013-04-01 17:00,2013-03-24 12:00,2013-04-06 12:00,,PT_Normal,,,,,iQlhMGk670yy3wIUaaDQ/A,AzMvPn6voEGP9yR3lyt++Q,,,N,0,0,,,2013-11-05 11:09,2013-11-05 11:09,admin,admin,
636,102353,4512,26222,6590,0,N,N,N,CP_Drtn,TT_Task,DT_FixedDUR2,TK_NotStart,JF721.588,Install Roof Manholes & Nozzles,6942,40,0,48,0,680,680,48,200,0,200,,,,2013-04-06 12:00,2013-04-11 10:00,,2013-04-02 07:00,2013-04-07 10:00,2013-04-02 07:00,2013-04-07 10:00,2013-04-02 07:00,2013-04-07 10:00,2013-04-06 12:00,2013-04-11 10:00,,PT_Normal,,,,,hoQw5ZeWfk2GjHjvAoipoQ,XyLBxpvVO02nLeXXA/6jWA,,,N,0,0,,,2013-11-05 11:09,2013-11-05 11:09,admin,admin,
637,102354,4512,26223,6590,0,N,N,N,CP_Drtn,TT_Task,DT_FixedDUR2,TK_NotStart,JF721.589,"Erect & Fix Stairs, Handrails & Platforms on Shell",6942,40,0,40,0,550,550,40,120,0,120,,,,2013-04-11 10:00,2013-04-15 15:00,,2013-04-07 10:00,2013-04-11 10:00,2013-04-07 10:00,2013-04-11 10:00,2013-04-07 10:00,2013-04-11 10:00,2013-04-11 10:00,2013-04-15 15:00,,PT_Normal,,,,,+Rjh1RE6xEehJIFym5m3Bw,5EyPUwMeTEmEfhHgV6rOaQ,,,N,0,0,,,2013-11-05 11:09,2013-11-05 11:09,admin,admin,
638,102355,4512,26223,6590,0,N,N,N,CP_Drtn,TT_Task,DT_FixedDUR2,TK_NotStart,JF721.590,Erect & Fix Roof Platforms & Handrails,6942,40,0,40,0,510,510,40,150,0,150,,,,2013-04-15 15:00,2013-04-20 10:00,,2013-04-11 10:00,2013-04-15 15:00,2013-04-11 10:00,2013-04-15 15:00,2013-04-11 10:00,2013-04-15 15:00,2013-04-15 15:00,2013-04-20 10:00,,PT_Normal,,,,,9Z+HtuVij0ySo9+hvPZJdw,Lb5PVGvsWk2o3r/VbRiomA,,,N,0,0,,,2013-11-05 11:09,2013-11-05 11:09,admin,admin,
639,102356,4512,26265,6590,0,N,N,N,CP_Drtn,TT_Task,DT_FixedDUR2,TK_NotStart,JF721.591,Install Blind Flanges,6965,40,0,8,0,120,120,8,50,0,50,,,,2013-04-20 10:00,2013-04-21 08:00,,2013-04-15 15:00,2013-04-16 13:00,2013-04-15 15:00,2013-04-16 13:00,2013-04-15 15:00,2013-04-16 13:00,2013-04-20 10:00,2013-04-21 08:00,,PT_Normal,,,,,Cxy+N37FjUCpU/AtEECxXA,bansJdM3X0yoUVEYaMB/xw,,,N,0,0,,,2013-11-05 11:09,2013-11-05 11:09,admin,admin,
640,102357,4512,26265,6590,0,N,N,N,CP_Drtn,TT_Task,DT_FixedDUR2,TK_NotStart,JF721.592,Tank Water Filling,6965,40,0,184,0,1840,1840,184,920,0,920,,,,2013-04-21 08:00,2013-05-10 14:30,,2013-04-16 13:00,2013-05-06 12:00,2013-04-16 13:00,2013-05-06 12:00,2013-04-16 13:00,2013-05-06 12:00,2013-04-21 08:00,2013-05-10 14:30,,PT_Normal,,,,,91FakrD0AUOS/tJ5r+/uDQ,Kh4mzvRJ7U6puAbF5H7xpQ,,,N,0,0,,,2013-11-05 11:09,2013-11-05 11:09,admin,admin,
641,102358,4512,26265,6590,0,N,N,N,CP_Drtn,TT_Task,DT_FixedDUR2,TK_NotStart,JF721.593,Hold Water for 48 Hours,6965,40,0,16,0,200,200,16,40,0,40,,,,2013-05-11 07:00,2013-05-12 13:00,,2013-05-06 12:00,2013-05-08 08:00,2013-05-06 12:00,2013-05-08 08:00,2013-05-06 12:00,2013-05-08 08:00,2013-05-11 07:00,2013-05-12 13:00,,PT_Normal,,,,,8uLxZhzXqUO6u9ifLwFQNA,Hztw/9W0LUmVyvntp0hYYQ,,,N,0,0,,,2013-11-05 11:09,2013-11-05 11:09,admin,admin,
642,102359,4512,26265,6590,0,N,N,N,CP_Drtn,TT_Task,DT_FixedDUR2,TK_NotStart,JF721.594,Drain Water from Tank,6965,96,0,96,0,1200,1200,96,480,0,480,,,,2013-05-18 14:00,2013-05-28 15:00,,2013-05-08 08:00,2013-05-18 14:00,2013-05-08 08:00,2013-05-18 14:00,2013-05-08 08:00,2013-05-18 14:00,2013-05-18 14:00,2013-05-28 15:00,,PT_Normal,,,,,XRitIb/gsEWeymiUs49S6A,TICNOBkmHEGq2yaXZRVaLA,,,N,0,0,,,2013-11-05 11:09,2013-11-05 11:09,admin,admin,
643,102360,4512,26265,6590,0,N,N,N,CP_Drtn,TT_Task,DT_FixedDUR2,TK_NotStart,JF721.595,Clean & Dry Out Tank,6942,96,0,16,0,180,180,16,80,0,80,,,,2013-05-28 15:00,2013-05-30 11:00,,2013-05-18 14:00,2013-05-20 10:00,2013-05-18 14:00,2013-05-20 10:00,2013-05-18 14:00,2013-05-20 10:00,2013-05-28 15:00,2013-05-30 11:00,,PT_Normal,,,,,XKGkvFxNEUeWBdhMvyNPDg,U7W2RDXctU2pKuHyUnEDrg,,,N,0,0,,,2013-11-05 11:09,2013-11-05 11:09,admin,admin,
644,102361,4512,26225,6590,0,N,N,N,CP_Drtn,TT_Task,DT_FixedDUR2,TK_NotStart,JF721.596,Erect Scafolding Outside Tank,6942,40,0,80,0,960,960,80,240,0,240,,,,2013-05-12 13:00,2013-05-21 08:00,,2013-05-08 08:00,2013-05-16 13:00,2013-05-08 08:00,2013-05-16 13:00,2013-05-08 08:00,2013-05-16 13:00,2013-05-12 13:00,2013-05-21 08:00,,PT_Normal,,,,,zMm8hIGSvEGS5nNtKpHJvA,NX0HJySfA0ee8dax3nEcVw,,,N,0,0,,,2013-11-05 11:09,2013-11-05 11:09,admin,admin,
645,102362,4512,26225,6590,0,N,N,N,CP_Drtn,TT_Task,DT_FixedDUR2,TK_NotStart,JF721.597,External Shell Blast & Prime,6950,40,0,48,0,560,560,48,120,0,120,,,,2013-05-21 08:00,2013-05-26 11:00,,2013-05-16 13:00,2013-05-21 16:00,2013-05-16 13:00,2013-05-21 16:00,2013-05-16 13:00,2013-05-21 16:00,2013-05-21 08:00,2013-05-26 11:00,,PT_Normal,,,,,SOs9hVhqdU2kthj5H/1RTA,pmfMQhFbCk2DnuEWFOOGgw,,,N,0,0,,,2013-11-05 11:09,2013-11-05 11:09,admin,admin,
646,102363,4512,26225,6590,0,N,N,N,CP_Drtn,TT_Task,DT_FixedDUR2,TK_NotStart,JF721.598,External Shell Secondary & Final Coat,6965,40,0,48,0,560,560,48,160,0,160,,,,2013-05-21 16:00,2013-05-27 09:00,,2013-05-17 13:30,2013-05-22 14:00,2013-05-17 13:30,2013-05-22 14:00,2013-05-17 13:30,2013-05-22 14:00,2013-05-21 16:00,2013-05-27 09:00,,PT_Normal,,,,,Ym+1yIvbYk6ZdOTh+Kc2vg,LrXrl8VuZUKaDkTnCorn2w,,,N,0,0,,,2013-11-05 11:09,2013-11-05 11:09,admin,admin,
647,102364,4512,26225,6590,0,N,N,N,CP_Drtn,TT_Task,DT_FixedDUR2,TK_NotStart,JF721.599,External Shell Paint Inspection,6935,40,0,24,0,100,100,24,30,0,30,,,,2013-05-27 09:00,2013-05-29 13:00,,2013-05-22 14:00,2013-05-25 13:00,2013-05-22 14:00,2013-05-25 13:00,2013-05-22 14:00,2013-05-25 13:00,2013-05-27 09:00,2013-05-29 13:00,,PT_Normal,,,,,jhMIz6lOaEmO9/9p8tEENQ,zNCSE9hsPU+w0PbWL4y0RQ,,,N,0,0,,,2013-11-05 11:09,2013-11-05 11:09,admin,admin,
648,102365,4512,26225,6590,0,N,N,N,CP_Drtn,TT_Task,DT_FixedDUR2,TK_NotStart,JF721.600,Dismantle External Scaffolding,6957,40,0,32,0,260,260,32,60,0,60,,,,2013-05-29 13:00,2013-06-02 10:00,,2013-05-25 13:00,2013-05-28 15:00,2013-05-25 13:00,2013-05-28 15:00,2013-05-25 13:00,2013-05-28 15:00,2013-05-29 13:00,2013-06-02 10:00,,PT_Normal,,,,,P25W8N+oSE+sfZIbix2yfQ,h8ZTaHGim0WHe47851X01g,,,N,0,0,,,2013-11-05 11:09,2013-11-05 11:09,admin,admin,
649,102366,4512,26226,6590,0,N,N,N,CP_Drtn,TT_Task,DT_FixedDUR2,TK_NotStart,JF721.601,Erect Scafolding Inside Tank,6942,96,56,64,0,720,720,64,240,0,240,,,,2013-05-30 11:00,2013-06-06 10:00,,2013-05-20 10:00,2013-05-27 09:00,2013-05-20 10:00,2013-05-27 09:00,2013-05-20 10:00,2013-05-27 09:00,2013-05-30 11:00,2013-06-06 10:00,,PT_Normal,,,,,n4O8SZ7aKk234QMW7DPw3w,vidy906DS0uiEq9Jcg/PUg,,,N,0,0,,,2013-11-05 11:09,2013-11-05 11:09,admin,admin,
650,102367,4512,26226,6590,0,N,N,N,CP_Drtn,TT_Task,DT_FixedDUR2,TK_NotStart,JF721.602,Internal Shell Blast & Prime,6949,40,0,40,0,420,420,40,120,0,120,,,,2013-06-02 10:00,2013-06-06 10:00,,2013-05-28 15:00,2013-06-02 10:00,2013-05-28 15:00,2013-06-02 10:00,2013-05-28 15:00,2013-06-02 10:00,2013-06-02 10:00,2013-06-06 10:00,,PT_Normal,,,,,BIzg3EC6hEiyOobJ4Zha+w,EcDxdvHaBEGzZrj34KuDLw,,,N,0,0,,,2013-11-05 11:09,2013-11-05 11:09,admin,admin,
651,102368,4512,26226,6590,0,N,N,N,CP_Drtn,TT_Task,DT_FixedDUR2,TK_NotStart,JF721.603,Internal Shell Secondary & Final Coat,6950,40,0,40,0,420,420,40,120,0,120,,,,2013-06-06 10:00,2013-06-10 15:00,,2013-06-02 10:00,2013-06-06 10:00,2013-06-02 10:00,2013-06-06 10:00,2013-06-02 10:00,2013-06-06 10:00,2013-06-06 10:00,2013-06-10 15:00,,PT_Normal,,,,,hNtqvXyD30K0rR57aVwG3A,wZGqCHL8t0WnxIy/M/19Uw,,,N,0,0,,,2013-11-05 11:09,2013-11-05 11:09,admin,admin,
652,102369,4512,26226,6590,0,N,N,N,CP_Drtn,TT_Task,DT_FixedDUR2,TK_NotStart,JF721.604,Internal Shell Paint Inspection,6966,40,0,24,0,110,110,24,30,0,30,,,,2013-06-06 10:00,2013-06-09 09:00,,2013-06-02 10:00,2013-06-04 14:00,2013-06-02 10:00,2013-06-04 14:00,2013-06-02 10:00,2013-06-04 14:00,2013-06-06 10:00,2013-06-09 09:00,,PT_Normal,,,,,hNRe3217C02foxndSexgfA,y9fO7Scg7E+e7C945Imudw,,,N,0,0,,,2013-11-05 11:09,2013-11-05 11:09,admin,admin,
653,102370,4512,26226,6590,0,N,N,N,CP_Drtn,TT_Task,DT_FixedDUR2,TK_NotStart,JF721.605,Dismantle Internal Scaffolding,6942,40,0,48,0,520,520,48,160,0,160,,,,2013-06-09 09:00,2013-06-13 17:00,,2013-06-04 14:00,2013-06-09 17:00,2013-06-04 14:00,2013-06-09 17:00,2013-06-04 14:00,2013-06-09 17:00,2013-06-09 09:00,2013-06-13 17:00,,PT_Normal,,,,,yRLriQYcI0CiBMjl9LLjBQ,yu9LhqdEMkmwT1t857x5Tw,,,N,0,0,,,2013-11-05 11:09,2013-11-05 11:09,admin,admin,
654,102371,4512,26226,6590,0,N,N,N,CP_Drtn,TT_Task,DT_FixedDUR2,TK_NotStart,JF721.606,Bottom/Annular Plate Blast & Prime,6949,40,0,32,0,260,260,32,80,0,80,,,,2013-06-14 09:30,2013-06-17 14:00,,2013-06-10 07:00,2013-06-13 09:00,2013-06-10 07:00,2013-06-13 09:00,2013-06-10 07:00,2013-06-13 09:00,2013-06-14 09:30,2013-06-17 14:00,,PT_Normal,,,,,gf9DfPqsqECd22vuQCsYaQ,DbN3WnOHDECoEhhms9W2Yg,,,N,0,0,,,2013-11-05 11:09,2013-11-05 11:09,admin,admin,
655,102372,4512,26226,6590,0,N,N,N,CP_Drtn,TT_Task,DT_FixedDUR2,TK_NotStart,JF721.607,Bottom/Annular Plate Secondary & Final Coat,6950,40,0,32,0,260,260,32,80,0,80,,,,2013-06-17 14:00,2013-06-20 16:00,,2013-06-13 09:00,2013-06-16 16:00,2013-06-13 09:00,2013-06-16 16:00,2013-06-13 09:00,2013-06-16 16:00,2013-06-17 14:00,2013-06-20 16:00,,PT_Normal,,,,,PYKavwAAVkaVW0xBDeWIEQ,5jQfhNzf/Uq3OARytNb6qw,,,N,0,0,,,2013-11-05 11:09,2013-11-05 11:09,admin,admin,
656,102373,4512,26226,6590,0,N,N,N,CP_Drtn,TT_Task,DT_FixedDUR2,TK_NotStart,JF721.608,Bottom/Annular Plate Paint Inspection,6942,40,0,24,0,150,150,24,40,0,40,,,,2013-06-20 16:00,2013-06-23 15:00,,2013-06-16 16:00,2013-06-19 10:00,2013-06-16 16:00,2013-06-19 10:00,2013-06-16 16:00,2013-06-19 10:00,2013-06-20 16:00,2013-06-23 15:00,,PT_Normal,,,,,ovM+u7s3nkea1DMjkln5rQ,t2L8aWgy5kSdkuqtYptyaw,,,N,0,0,,,2013-11-05 11:09,2013-11-05 11:09,admin,admin,
657,102374,4512,26227,6590,0,N,N,N,CP_Drtn,TT_Task,DT_FixedDUR2,TK_NotStart,JF721.609,Tanks lighting,6942,40,0,16,0,220,220,16,60,0,60,,,,2013-07-26 11:30,2013-07-28 10:00,,2013-07-22 09:00,2013-07-23 15:00,2013-07-22 09:00,2013-07-23 15:00,2013-07-22 09:00,2013-07-23 15:00,2013-07-26 11:30,2013-07-28 10:00,,PT_Normal,,,,,15MGHtz9r0uklyBTOrYfDg,7y5Qe1s210qmT+OEF38g9A,,,N,0,0,,,2013-11-05 11:09,2013-11-05 11:09,admin,admin,
658,102375,4512,26227,6590,0,N,N,N,CP_Drtn,TT_Task,DT_FixedDUR2,TK_NotStart,JF721.610,Tanks lighting  protection,6942,40,0,16,0,220,220,16,80,0,80,,,,2013-07-28 10:00,2013-07-29 16:00,,2013-07-23 15:00,2013-07-25 11:00,2013-07-23 15:00,2013-07-25 11:00,2013-07-23 15:00,2013-07-25 11:00,2013-07-28 10:00,2013-07-29 16:00,,PT_Normal,,,,,cWiYtoHtmk+PKNLFnxvryA,DDo+Xv7R+k66PRF1lFqpDQ,,,N,0,0,,,2013-11-05 11:09,2013-11-05 11:09,admin,admin,
659,102376,4512,26227,6590,0,N,N,N,CP_Drtn,TT_Task,DT_FixedDUR2,TK_NotStart,JF721.611,Grounding system,6942,40,0,16,0,200,200,16,60,0,60,,,,2013-07-29 16:00,2013-07-31 12:00,,2013-07-25 11:00,2013-07-27 12:00,2013-07-25 11:00,2013-07-27 12:00,2013-07-25 11:00,2013-07-27 12:00,2013-07-29 16:00,2013-07-31 12:00,,PT_Normal,,,,,E/So95UC4U+xz4eouvWu2A,AdBUkj8+oEi0Eo2JeQDOPQ,,,N,0,0,,,2013-11-05 11:09,2013-11-05 11:09,admin,admin,
660,102377,4512,26228,6590,0,N,N,N,CP_Drtn,TT_Task,DT_FixedDUR2,TK_NotStart,JF721.612,Concrete testing,6916,40,0,24,0,270,270,24,90,0,90,,,,2013-07-31 12:00,2013-08-03 11:00,,2013-07-27 12:00,2013-07-29 16:00,2013-07-27 12:00,2013-07-29 16:00,2013-07-27 12:00,2013-07-29 16:00,2013-07-31 12:00,2013-08-03 11:00,,PT_Normal,,,,,09Uv8Vqt7Eq9mz0tdJelKQ,6ft2cTrvvkS3JbzQ3DAeBg,,,N,0,0,,,2013-11-05 11:09,2013-11-05 11:09,admin,admin,
661,102378,4512,26228,6590,0,N,N,N,CP_Drtn,TT_Task,DT_FixedDUR2,TK_NotStart,JF721.613,RT testing for the welding,6942,40,0,24,0,270,270,24,120,0,120,,,,2013-08-03 11:00,2013-08-05 15:00,,2013-07-29 16:00,2013-08-01 10:00,2013-07-29 16:00,2013-08-01 10:00,2013-07-29 16:00,2013-08-01 10:00,2013-08-03 11:00,2013-08-05 15:00,,PT_Normal,,,,,Q0zuy0w10k61KMYjBnd8Pg,Bc+toI8VmUGsp2SonmfYsg,,,N,0,0,,,2013-11-05 11:09,2013-11-05 11:09,admin,admin,
662,102379,4512,26228,6590,0,N,N,N,CP_Drtn,TT_Task,DT_FixedDUR2,TK_NotStart,JF721.614,Sand testing,6915,40,0,32,0,360,360,32,160,0,160,,,,2013-08-05 15:00,2013-08-08 17:00,,2013-08-01 10:00,2013-08-04 17:00,2013-08-01 10:00,2013-08-04 17:00,2013-08-01 10:00,2013-08-04 17:00,2013-08-05 15:00,2013-08-08 17:00,,PT_Normal,,,,,5dcYajNbCEeiCSppfxDxXA,cFr8gK331kqMvYV03T5dHA,,,N,0,0,,,2013-11-05 11:09,2013-11-05 11:09,admin,admin,
663,102380,4512,26228,6590,0,N,N,N,CP_Drtn,TT_Task,DT_FixedDUR2,TK_NotStart,JF721.615,Tank Calibration,6965,40,0,24,0,270,270,24,120,0,120,,,,2013-08-09 09:30,2013-08-11 16:00,,2013-08-05 07:00,2013-08-07 11:00,2013-08-05 07:00,2013-08-07 11:00,2013-08-05 07:00,2013-08-07 11:00,2013-08-09 09:30,2013-08-11 16:00,,PT_Normal,,,,,h/YZ+vqo80Wya0q78uh6yQ,x7QmKf7CPEeCne+hTwDCMA,,,N,0,0,,,2013-11-05 11:09,2013-11-05 11:09,admin,admin,
664,102381,4512,26229,6590,0,N,N,N,CP_Drtn,TT_Task,DT_FixedDUR2,TK_NotStart,JF721.616,FInal Inspection & Hand over to client,6915,40,0,24,0,270,270,24,120,0,120,,,,2013-08-11 16:00,2013-08-14 10:00,,2013-08-07 11:00,2013-08-10 10:00,2013-08-07 11:00,2013-08-10 10:00,2013-08-07 11:00,2013-08-10 10:00,2013-08-11 16:00,2013-08-14 10:00,,PT_Normal,,,,,roSHWzWnhU6fDQADJSn4zA,I9JlI74c8UyY7wb7nq2A5Q,,,N,0,0,,,2013-11-05 11:09,2013-11-05 11:09,admin,admin,
665,102382,4512,26230,6590,0,N,N,N,CP_Drtn,TT_Task,DT_FixedDUR2,TK_NotStart,JF721.536,Concrete Pouring,6980,40,0,24,0,140,140,24,30,0,30,,,,2012-10-31 11:00,2012-11-03 10:00,,2012-10-25 11:00,2012-10-29 15:00,2012-10-25 11:00,2012-10-29 15:00,2012-10-25 11:00,2012-10-29 15:00,2012-10-31 11:00,2012-11-03 10:00,,PT_Normal,,,,,VW7i4b1GyUOMGXujLgdOtw,IS4vCyzVkEaBdYQLzRNHwA,,,N,0,0,,,2013-11-05 11:09,2013-11-05 11:09,admin,admin,
666,102383,4512,26230,6590,0,N,N,N,CP_Drtn,TT_Task,DT_FixedDUR2,TK_NotStart,JF721.537,Concrete Curing,6965,40,0,24,0,450,450,24,90,0,90,,,,2012-11-03 10:00,2012-11-05 14:00,,2012-10-29 15:00,2012-11-01 09:00,2012-10-29 15:00,2012-11-01 09:00,2012-10-29 15:00,2012-11-01 09:00,2012-11-03 10:00,2012-11-05 14:00,,PT_Normal,,,,,TqgQ3cmqIEe/Yjy3PxROFA,1YEsaRCpGkWH2OpUJiN/cQ,,,N,0,0,,,2013-11-05 11:09,2013-11-05 11:09,admin,admin,
667,102384,4512,26230,6590,0,N,N,N,CP_Drtn,TT_Task,DT_FixedDUR2,TK_NotStart,JF721.538,Removal of Formworks,6935,40,0,16,0,280,280,16,60,0,60,,,,2012-11-05 14:00,2012-11-07 10:00,,2012-11-01 09:00,2012-11-03 10:00,2012-11-01 09:00,2012-11-03 10:00,2012-11-01 09:00,2012-11-03 10:00,2012-11-05 14:00,2012-11-07 10:00,,PT_Normal,,,,,5bIs+ZHrmkm6oZtN07n5pg,M6QYgC4jbUu+Pmc6mpXdDQ,,,N,0,0,,,2013-11-05 11:09,2013-11-05 11:09,admin,admin,
668,102385,4512,26230,6590,0,N,N,N,CP_Drtn,TT_Task,DT_FixedDUR2,TK_NotStart,JF721.539,Backfilling,6965,40,0,32,0,760,760,32,120,0,120,,,,2012-11-07 10:00,2012-11-10 17:00,,2012-11-03 10:00,2012-11-06 12:00,2012-11-03 10:00,2012-11-06 12:00,2012-11-03 10:00,2012-11-06 12:00,2012-11-07 10:00,2012-11-10 17:00,,PT_Normal,,,,,V89RRz6UOUmUGkDiVLSXSQ,3eyz/V5xikmiPeysCYtyww,,,N,0,0,,,2013-11-05 11:09,2013-11-05 11:09,admin,admin,
669,102386,4512,26272,6590,0,N,N,N,CP_Drtn,TT_FinMile,DT_FixedDrtn,TK_NotStart,4.7,Complete MOBILIZATION of camp with Catering and accommodation facilities,,40,0,0,0,0,0,0,0,0,0,,,,2012-10-09 09:00,2012-10-09 09:00,,2012-10-04 14:00,2012-10-04 14:00,2012-10-04 14:00,2012-10-04 14:00,2012-10-04 14:00,2012-10-04 14:00,2012-10-09 09:00,2012-10-09 09:00,,PT_Normal,,,,,pLrIEQ7ODkuZKAd35MabPg,,,,N,0,0,,,2013-11-05 11:09,2013-11-05 11:09,admin,admin,
670,102387,4512,26232,6590,0,N,N,N,CP_Drtn,TT_FinMile,DT_FixedDrtn,TK_NotStart,4.9,Complete COnstruction of Civil/Structural works,,40,0,0,0,0,0,0,0,0,0,,,,2012-11-10 17:00,2012-11-10 17:00,,2012-11-06 12:00,2012-11-06 12:00,2012-11-06 12:00,2012-11-06 12:00,2012-11-06 12:00,2012-11-06 12:00,2012-11-10 17:00,2012-11-10 17:00,,PT_Normal,,,,,hEdXPso7N0yVU4eYvUvlEQ,,,,N,0,0,,,2013-11-05 11:09,2013-11-05 11:09,admin,admin,
671,102388,4512,26233,6590,0,N,N,N,CP_Drtn,TT_FinMile,DT_FixedDrtn,TK_NotStart,2.D,MCC,,40,0,0,0,0,0,0,0,0,0,,,,2013-04-20 10:00,2013-04-20 10:00,,2013-04-15 15:00,2013-04-15 15:00,2013-04-15 15:00,2013-04-15 15:00,2013-04-15 15:00,2013-04-15 15:00,2013-04-20 10:00,2013-04-20 10:00,,PT_Normal,,,,,f6/+TQGWN0qv5luntnagOQ,,,,N,0,0,,,2013-11-05 11:09,2013-11-05 11:09,admin,admin,
672,102389,4512,26234,6590,0,N,N,N,CP_Drtn,TT_FinMile,DT_FixedDrtn,TK_NotStart,4.D,Final Testing,,96,0,0,0,0,0,0,0,0,0,,,,2013-05-30 11:00,2013-05-30 11:00,,2013-05-20 10:00,2013-05-20 10:00,2013-05-20 10:00,2013-05-20 10:00,2013-05-20 10:00,2013-05-20 10:00,2013-05-30 11:00,2013-05-30 11:00,,PT_Normal,,,,,a+48gJR9PE++rZvuBnZKbA,,,,N,0,0,,,2013-11-05 11:09,2013-11-05 11:09,admin,admin,
673,102390,4512,26235,6590,0,N,N,N,CP_Drtn,TT_FinMile,DT_FixedDrtn,TK_NotStart,4.10,Complete Installation,,40,0,0,0,0,0,0,0,0,0,,,,2013-07-31 12:00,2013-07-31 12:00,,2013-07-27 12:00,2013-07-27 12:00,2013-07-27 12:00,2013-07-27 12:00,2013-07-27 12:00,2013-07-27 12:00,2013-07-31 12:00,2013-07-31 12:00,,PT_Normal,,,,,ejz52pDfN0uSovfPskyqbw,,,,N,0,0,,,2013-11-05 11:09,2013-11-05 11:09,admin,admin,
674,102391,4512,26236,6590,0,N,N,N,CP_Drtn,TT_FinMile,DT_FixedDrtn,TK_NotStart,3.D,THird Party Testing,,40,0,0,0,0,0,0,0,0,0,,,,2013-08-11 16:00,2013-08-11 16:00,,2013-08-07 11:00,2013-08-07 11:00,2013-08-07 11:00,2013-08-07 11:00,2013-08-07 11:00,2013-08-07 11:00,2013-08-11 16:00,2013-08-11 16:00,,PT_Normal,,,,,leWt4bx0JkOfCavzSnkrfQ,,,,N,0,0,,,2013-11-05 11:09,2013-11-05 11:09,admin,admin,
675,102392,4512,26237,6590,0,N,N,N,CP_Drtn,TT_FinMile,DT_FixedDrtn,TK_NotStart,6.D,Project Completion,,40,40,0,0,0,0,0,0,0,0,,,,2013-08-14 10:00,2013-08-14 10:00,,2013-08-10 10:00,2013-08-10 10:00,2013-08-10 10:00,2013-08-10 10:00,2013-08-10 10:00,2013-08-10 10:00,2013-08-14 10:00,2013-08-14 10:00,,PT_Normal,,,,,2q2AtQqTIUykGTGz8Y0naQ,,,,N,0,0,,,2013-11-05 11:09,2013-11-05 11:09,admin,admin,
676,102393,4512,26240,6590,0,N,N,N,CP_Drtn,TT_Task,DT_FixedDUR2,TK_NotStart,JF721.683,Rental For Workers & Engineers Accomodation with Facilities,6915,0,0,16,0,40,40,16,20,0,20,,,,2012-07-31 13:00,2012-08-02 09:00,,2012-07-31 13:00,2012-08-02 09:00,2012-07-31 13:00,2012-08-02 09:00,2012-07-31 13:00,2012-08-02 09:00,2012-07-31 13:00,2012-08-02 09:00,,PT_Normal,,,,,xizJJN4VSEOYeijmQBCWCA,2Rc3PV34RUGdQOdfu2ixow,,,Y,0,0,,,2013-11-05 11:09,2013-11-05 11:09,admin,admin,
677,102394,4512,26240,6590,0,N,N,N,CP_Drtn,TT_Task,DT_FixedDUR2,TK_NotStart,JF721.685,Ma'aden Inspection & Approval for Portacabins,6915,0,0,8,0,90,90,8,40,0,40,,,,2012-10-03 16:00,2012-10-04 14:00,,2012-10-03 16:00,2012-10-04 14:00,2012-10-03 16:00,2012-10-04 14:00,2012-10-03 16:00,2012-10-04 14:00,2012-10-03 16:00,2012-10-04 14:00,,PT_Normal,,,,,cg+Vgw+G/kOsoo0NtEt5Ug,a1G97IqQG0+dlGprkAwg6w,,,Y,0,0,,,2013-11-05 11:09,2013-11-05 11:09,admin,admin,
678,102395,4512,26240,6590,0,N,N,N,CP_Drtn,TT_Task,DT_FixedDUR2,TK_NotStart,JF721.684,Complete Mobilize AZ Equipment to Site & Prepare the site fabrication yard,6915,0,0,552,0,6210,6210,552,2070,0,2070,,,,2012-08-02 09:00,2012-10-03 16:00,,2012-08-02 09:00,2012-10-03 16:00,2012-08-02 09:00,2012-10-03 16:00,2012-08-02 09:00,2012-10-03 16:00,2012-08-02 09:00,2012-10-03 16:00,,PT_Normal,,,,,0j+VtA8ljUySDG9pCXy6rQ,fT50ib2b5028oMgSJijUig,,,Y,0,0,,,2013-11-05 11:09,2013-11-05 11:09,admin,admin,
679,102396,4512,26241,6590,0,N,N,N,CP_Drtn,TT_Task,DT_FixedDUR2,TK_NotStart,JF721.686,Layout/Stake-out,6942,0,0,32,0,520,520,32,160,0,160,,,,2012-10-04 14:00,2012-10-08 11:00,,2012-10-04 14:00,2012-10-08 11:00,2012-10-04 14:00,2012-10-08 11:00,2012-10-04 14:00,2012-10-08 11:00,2012-10-04 14:00,2012-10-08 11:00,,PT_Normal,,,,,G1yPE84BeEGcNgS//R0HDw,8aEH3T4ZUEGZEaLuWt5WQQ,,,Y,0,0,,,2013-11-05 11:09,2013-11-05 11:09,admin,admin,
680,102397,4512,26241,6590,0,N,N,N,CP_Drtn,TT_Task,DT_FixedDUR2,TK_NotStart,JF721.687,Excavation,6942,0,0,72,0,990,990,72,450,0,450,,,,2012-10-08 11:00,2012-10-16 08:00,,2012-10-08 11:00,2012-10-16 08:00,2012-10-08 11:00,2012-10-16 08:00,2012-10-08 11:00,2012-10-16 08:00,2012-10-08 11:00,2012-10-16 08:00,,PT_Normal,,,,,Ax+b+jcfFkmT5H0q/xlssw,giC/6fOIbkG47z03K6t19Q,,,Y,0,0,,,2013-11-05 11:09,2013-11-05 11:09,admin,admin,
681,102398,4512,26241,6590,0,N,N,N,CP_Drtn,TT_Task,DT_FixedDUR2,TK_NotStart,JF721.688,SteelWorks/Formworks,6980,0,0,64,0,1120,1120,64,320,0,320,,,,2012-10-16 08:00,2012-10-22 17:00,,2012-10-16 08:00,2012-10-22 17:00,2012-10-16 08:00,2012-10-22 17:00,2012-10-16 08:00,2012-10-22 17:00,2012-10-16 08:00,2012-10-22 17:00,,PT_Normal,,,,,OCp4XMxZGkqrTIOIo7J1AQ,ehYEnHImd0SuSM6egEBNwg,,,Y,0,0,,,2013-11-05 11:09,2013-11-05 11:09,admin,admin,
682,102399,4512,26241,6590,0,N,N,N,CP_Drtn,TT_Task,DT_FixedDUR2,TK_NotStart,JF721.689,Soil Compaction,6965,0,0,56,0,840,840,56,350,0,350,,,,2012-10-23 07:00,2012-10-30 13:00,,2012-10-23 07:00,2012-10-30 13:00,2012-10-23 07:00,2012-10-30 13:00,2012-10-23 07:00,2012-10-30 13:00,2012-10-23 07:00,2012-10-30 13:00,,PT_Normal,,,,,KOTXFQgJ50KtiAbMpv15Tw,NliwUuV3RUKP0Chxh0sJTw,,,Y,0,0,,,2013-11-05 11:09,2013-11-05 11:09,admin,admin,
683,102400,4512,26242,6590,0,N,N,N,CP_Drtn,TT_Task,DT_FixedDUR2,TK_NotStart,JF721.690,Concrete Pouring,6928,0,0,24,0,390,390,24,98,0,98,,,,2012-10-30 13:00,2012-11-01 17:00,,2012-10-30 13:00,2012-11-01 17:00,2012-10-30 13:00,2012-11-01 17:00,2012-10-30 13:00,2012-11-01 17:00,2012-10-30 13:00,2012-11-01 17:00,,PT_Normal,,,,,H4v+xxZjAUSrULfL5jjHcA,lgBZInqCA0iktTS9L5HPoQ,,,Y,0,0,,,2013-11-05 11:09,2013-11-05 11:09,admin,admin,
684,102401,4512,26242,6590,0,N,N,N,CP_Drtn,TT_Task,DT_FixedDUR2,TK_NotStart,JF721.691,Concrete Curing,6965,0,0,56,0,980,980,56,280,0,280,,,,2012-11-02 09:30,2012-11-08 08:00,,2012-11-02 09:30,2012-11-08 08:00,2012-11-02 09:30,2012-11-08 08:00,2012-11-02 09:30,2012-11-08 08:00,2012-11-02 09:30,2012-11-08 08:00,,PT_Normal,,,,,NYP5XT7qLUC7ZRkrXTmfdg,HwZ5gvACMke9z3M1AWDl6Q,,,Y,0,0,,,2013-11-05 11:09,2013-11-05 11:09,admin,admin,
685,102402,4512,26242,6590,0,N,N,N,CP_Drtn,TT_Task,DT_FixedDUR2,TK_NotStart,JF721.692,Removal of Formworks,6980,0,0,40,0,650,650,40,150,0,150,,,,2012-11-08 08:00,2012-11-12 13:00,,2012-11-08 08:00,2012-11-12 13:00,2012-11-08 08:00,2012-11-12 13:00,2012-11-08 08:00,2012-11-12 13:00,2012-11-08 08:00,2012-11-12 13:00,,PT_Normal,,,,,WVDtITvvw0Wj7N/M3o+eOw,7CvuZEXklUyMbCMVegVyGQ,,,Y,0,0,,,2013-11-05 11:09,2013-11-05 11:09,admin,admin,
686,102403,4512,26242,6590,0,N,N,N,CP_Drtn,TT_Task,DT_FixedDUR2,TK_NotStart,JF721.693,Backfilling,6965,0,0,72,0,1080,1080,72,450,0,450,,,,2012-11-12 13:00,2012-11-20 10:00,,2012-11-12 13:00,2012-11-20 10:00,2012-11-12 13:00,2012-11-20 10:00,2012-11-12 13:00,2012-11-20 10:00,2012-11-12 13:00,2012-11-20 10:00,,PT_Normal,,,,,6WbarnyOEEKWh74HreB91g,SuAsiSfHu0u0dHyOBognAA,,,Y,0,0,,,2013-11-05 11:09,2013-11-05 11:09,admin,admin,
687,102404,4512,26243,6590,0,N,N,N,CP_Drtn,TT_Task,DT_FixedDUR2,TK_NotStart,JF721.694,Erect & Weld Annular Plates,6942,0,0,120,0,1400,1400,120,490,0,490,,,,2012-11-20 10:00,2012-12-03 10:00,,2012-11-20 10:00,2012-12-03 10:00,2012-11-20 10:00,2012-12-03 10:00,2012-11-20 10:00,2012-12-03 10:00,2012-11-20 10:00,2012-12-03 10:00,,PT_Normal,,,,,MjMEz8m5OkyYKMZfIfF9Kg,iK+5dg5IFkezOhpPPtu74A,,,Y,0,0,,,2013-11-05 11:09,2013-11-05 11:09,admin,admin,
688,102405,4512,26243,6590,0,N,N,N,CP_Drtn,TT_Task,DT_FixedDUR2,TK_NotStart,JF721.695,Erect & Tack Bottom Plates,6951,0,0,160,0,1320,1320,160,600,0,600,,,,2012-12-03 10:00,2012-12-20 10:00,,2012-12-03 10:00,2012-12-20 10:00,2012-12-03 10:00,2012-12-20 10:00,2012-12-03 10:00,2012-12-20 10:00,2012-12-03 10:00,2012-12-20 10:00,,PT_Normal,,,,,Opr23yq4aUu4W9LJmYsQ+A,MQDw194aYESKum+fkXmNFw,,,Y,0,0,,,2013-11-05 11:09,2013-11-05 11:09,admin,admin,
689,102406,4512,26243,6590,0,N,N,N,CP_Drtn,TT_Task,DT_FixedDUR2,TK_NotStart,JF721.696,Welding of Bottom Plates,6968,0,0,200,0,1540,1540,200,700,0,700,,,,2012-12-20 10:00,2013-01-10 15:00,,2012-12-20 10:00,2013-01-10 15:00,2012-12-20 10:00,2013-01-10 15:00,2012-12-20 10:00,2013-01-10 15:00,2012-12-20 10:00,2013-01-10 15:00,,PT_Normal,,,,,mbyYVjmfwUKye8nsBQllZA,ulLMCHQR/0GnA+7JHiR90A,,,Y,0,0,,,2013-11-05 11:09,2013-11-05 11:09,admin,admin,
690,102407,4512,26243,6590,0,N,N,N,CP_Drtn,TT_Task,DT_FixedDUR2,TK_NotStart,JF721.697,Visual Inspection & Cleaning,6958,0,0,8,0,210,210,8,100,0,100,,,,2013-01-10 15:00,2013-01-12 08:00,,2013-01-10 15:00,2013-01-12 08:00,2013-01-10 15:00,2013-01-12 08:00,2013-01-10 15:00,2013-01-12 08:00,2013-01-10 15:00,2013-01-12 08:00,,PT_Normal,,,,,JXkfEMt+GkysbkeCIgcq0A,LrOG1LWhOEK0Et4ItbMRXw,,,Y,0,0,,,2013-11-05 11:09,2013-11-05 11:09,admin,admin,
691,102408,4512,26243,6590,0,N,N,N,CP_Drtn,TT_Task,DT_FixedDUR2,TK_NotStart,JF721.698,Carry Out NDT & Vaccuum Box Test,6928,0,0,16,0,440,440,16,180,0,180,,,,2013-01-12 08:00,2013-01-13 14:00,,2013-01-12 08:00,2013-01-13 14:00,2013-01-12 08:00,2013-01-13 14:00,2013-01-12 08:00,2013-01-13 14:00,2013-01-12 08:00,2013-01-13 14:00,,PT_Normal,,,,,tzWl4ZIySkuIfM4NpQJvqg,5dhYBaFVVEynToPcLFCXMw,,,Y,0,0,,,2013-11-05 11:09,2013-11-05 11:09,admin,admin,
692,102409,4512,26244,6590,0,N,N,N,CP_Drtn,TT_Task,DT_FixedDUR2,TK_NotStart,JF721.699,Prepare Shell Course # 1 for Erection,6968,0,0,24,0,250,250,24,90,0,90,,,,2013-01-12 16:00,2013-01-15 10:00,,2013-01-12 16:00,2013-01-15 10:00,2013-01-12 16:00,2013-01-15 10:00,2013-01-12 16:00,2013-01-15 10:00,2013-01-12 16:00,2013-01-15 10:00,,PT_Normal,,,,,1ie4qw49R0e4aXIg8NW7iA,d6c4iEtrb0uIHtJeGdpJAg,,,Y,0,0,,,2013-11-05 11:09,2013-11-05 11:09,admin,admin,
693,102410,4512,26244,6590,0,N,N,N,CP_Drtn,TT_Task,DT_FixedDUR2,TK_NotStart,JF721.700,Erect & Tack Shell Course # 1,6968,0,0,32,0,500,500,32,220,0,220,,,,2013-01-15 10:00,2013-01-18 14:30,,2013-01-15 10:00,2013-01-18 14:30,2013-01-15 10:00,2013-01-18 14:30,2013-01-15 10:00,2013-01-18 14:30,2013-01-15 10:00,2013-01-18 14:30,,PT_Normal,,,,,csiZPVBSHkOxDsHIkmLPOA,u8XAl/Bct0CL9S4Fwy2y+g,,,Y,0,0,,,2013-11-05 11:09,2013-11-05 11:09,admin,admin,
694,102411,4512,26244,6590,0,N,N,N,CP_Drtn,TT_Task,DT_FixedDUR2,TK_NotStart,JF721.701,Weld Outer Vertical Seam,6967,0,0,32,0,500,500,32,180,0,180,,,,2013-01-16 08:00,2013-01-19 15:00,,2013-01-16 08:00,2013-01-19 15:00,2013-01-16 08:00,2013-01-19 15:00,2013-01-16 08:00,2013-01-19 15:00,2013-01-16 08:00,2013-01-19 15:00,,PT_Normal,,,,,TBcAsD0KzkyHB7Lhpi6IwQ,Pj7rh0WrJEi066zVy+zJkA,,,Y,0,0,,,2013-11-05 11:09,2013-11-05 11:09,admin,admin,
695,102412,4512,26244,6590,0,N,N,N,CP_Drtn,TT_Task,DT_FixedDUR2,TK_NotStart,JF721.702,Backgouge & NDT Inside Vertical Seam,6951,0,0,32,0,540,540,32,240,0,240,,,,2013-01-16 16:00,2013-01-20 13:00,,2013-01-16 16:00,2013-01-20 13:00,2013-01-16 16:00,2013-01-20 13:00,2013-01-16 16:00,2013-01-20 13:00,2013-01-16 16:00,2013-01-20 13:00,,PT_Normal,,,,,V+inywj+10a230MsaXoLYQ,9SqiV+THWkOMSIPsZHiKPA,,,Y,0,0,,,2013-11-05 11:09,2013-11-05 11:09,admin,admin,
696,102413,4512,26244,6590,0,N,N,N,CP_Drtn,TT_Task,DT_FixedDUR2,TK_NotStart,JF721.703,Weld Inside Vertical Seam,6968,0,0,32,0,540,540,32,240,0,240,,,,2013-01-17 14:00,2013-01-21 11:00,,2013-01-17 14:00,2013-01-21 11:00,2013-01-17 14:00,2013-01-21 11:00,2013-01-17 14:00,2013-01-21 11:00,2013-01-17 14:00,2013-01-21 11:00,,PT_Normal,,,,,MGkMkIn000Ojq39wgd/YYw,AdTl9eI0IUWBqeDO85uDcw,,,Y,0,0,,,2013-11-05 11:09,2013-11-05 11:09,admin,admin,
697,102414,4512,26245,6590,0,N,N,N,CP_Drtn,TT_Task,DT_FixedDUR2,TK_NotStart,JF721.704,Prepare Shell Course # 2 for Erection,6968,0,0,24,0,260,260,24,120,0,120,,,,2013-01-19 15:00,2013-01-22 09:00,,2013-01-19 15:00,2013-01-22 09:00,2013-01-19 15:00,2013-01-22 09:00,2013-01-19 15:00,2013-01-22 09:00,2013-01-19 15:00,2013-01-22 09:00,,PT_Normal,,,,,JP6rNkFkDkmP/09/SSlgIQ,tUBKxP5aRk2fnpam+AvfQg,,,Y,0,0,,,2013-11-05 11:09,2013-11-05 11:09,admin,admin,
698,102415,4512,26245,6590,0,N,N,N,CP_Drtn,TT_Task,DT_FixedDUR2,TK_NotStart,JF721.705,Erect & Tack Shell Course # 2,6968,0,0,32,0,540,540,32,240,0,240,,,,2013-01-22 09:00,2013-01-25 13:30,,2013-01-22 09:00,2013-01-25 13:30,2013-01-22 09:00,2013-01-25 13:30,2013-01-22 09:00,2013-01-25 13:30,2013-01-22 09:00,2013-01-25 13:30,,PT_Normal,,,,,987DRmnNXECOE2/5KtnGsw,t4ZbSXnJU02oEmyLh6ubyw,,,Y,0,0,,,2013-11-05 11:09,2013-11-05 11:09,admin,admin,
699,102416,4512,26245,6590,0,N,N,N,CP_Drtn,TT_Task,DT_FixedDUR2,TK_NotStart,JF721.706,Weld Outer Vertical Seam,6968,0,0,40,0,810,810,40,360,0,360,,,,2013-01-23 07:00,2013-01-27 11:00,,2013-01-23 07:00,2013-01-27 11:00,2013-01-23 07:00,2013-01-27 11:00,2013-01-23 07:00,2013-01-27 11:00,2013-01-23 07:00,2013-01-27 11:00,,PT_Normal,,,,,Rj9y/1l5NEqnSm5OfYSuNA,HYkbKNWITEqZxNX0M8mnCw,,,Y,0,0,,,2013-11-05 11:09,2013-11-05 11:09,admin,admin,
700,102417,4512,26245,6590,0,N,N,N,CP_Drtn,TT_Task,DT_FixedDUR2,TK_NotStart,JF721.707,Backgouge & NDT Inside Vertical Seam,6968,0,0,32,0,500,500,32,240,0,240,,,,2013-01-23 15:00,2013-01-27 11:00,,2013-01-23 15:00,2013-01-27 11:00,2013-01-23 15:00,2013-01-27 11:00,2013-01-23 15:00,2013-01-27 11:00,2013-01-23 15:00,2013-01-27 11:00,,PT_Normal,,,,,DzWzuH6OKUOlfwWar/GE8Q,gNhWts4SvEK3BpGhG9B+zw,,,Y,0,0,,,2013-11-05 11:09,2013-11-05 11:09,admin,admin,
701,102418,4512,26245,6590,0,N,N,N,CP_Drtn,TT_Task,DT_FixedDUR2,TK_NotStart,JF721.708,Weld Inside Vertical Seam,6968,0,0,32,0,500,500,32,240,0,240,,,,2013-01-24 13:00,2013-01-27 19:00,,2013-01-24 13:00,2013-01-27 19:00,2013-01-24 13:00,2013-01-27 19:00,2013-01-24 13:00,2013-01-27 19:00,2013-01-24 13:00,2013-01-27 19:00,,PT_Normal,,,,,nMF7Bo538UWoiwiuEVnIKQ,MvLRK6I6TEmYCaexynKPLQ,,,Y,0,0,,,2013-11-05 11:09,2013-11-05 11:09,admin,admin,
702,102419,4512,26245,6590,0,N,N,N,CP_Drtn,TT_Task,DT_FixedDUR2,TK_NotStart,JF721.709,"""""Fit & Tack Horizontal Seam between Shell Course # 1 & 2""""",6968,0,0,32,0,520,520,32,220,0,220,,,,2013-01-25 13:30,2013-01-28 10:00,,2013-01-25 13:30,2013-01-28 10:00,2013-01-25 13:30,2013-01-28 10:00,2013-01-25 13:30,2013-01-28 10:00,2013-01-25 13:30,2013-01-28 10:00,,PT_Normal,,,,,EI88Wjhn00KZQFc0ZJbZHQ,An8zdtgrsUKiV46KXvF9HQ,,,Y,0,0,,,2013-11-05 11:09,2013-11-05 11:09,admin,admin,
703,102420,4512,26245,6590,0,N,N,N,CP_Drtn,TT_Task,DT_FixedDUR2,TK_NotStart,JF721.710,"""""Weld Outer Horizontal Seam between Shell Course # 1 & 2""""",6968,0,0,48,0,1080,1080,48,440,0,440,,,,2013-01-26 14:00,2013-01-30 14:00,,2013-01-26 14:00,2013-01-30 14:00,2013-01-26 14:00,2013-01-30 14:00,2013-01-26 14:00,2013-01-30 14:00,2013-01-26 14:00,2013-01-30 14:00,,PT_Normal,,,,,+50DY6XV60iMaaRRzG/Wew,QppJYaxV/0mwUOr4zKE89Q,,,Y,0,0,,,2013-11-05 11:09,2013-11-05 11:09,admin,admin,
704,102421,4512,26245,6590,0,N,N,N,CP_Drtn,TT_Task,DT_FixedDUR2,TK_NotStart,JF721.711,"""""Backgouge & NDT Inside Horizontal Seam between Shell Course# 1 & 2""""",6968,0,0,32,0,540,540,32,240,0,240,,,,2013-01-27 11:00,2013-01-29 16:00,,2013-01-27 11:00,2013-01-29 16:00,2013-01-27 11:00,2013-01-29 16:00,2013-01-27 11:00,2013-01-29 16:00,2013-01-27 11:00,2013-01-29 16:00,,PT_Normal,,,,,3qSJs10UwEuvwOPxPQWzTw,fuk5zwl2FUybFPoMM/N9+g,,,Y,0,0,,,2013-11-05 11:09,2013-11-05 11:09,admin,admin,
705,102422,4512,26245,6590,0,N,N,N,CP_Drtn,TT_Task,DT_FixedDUR2,TK_NotStart,JF721.712,"Weld Inner Horizontal Seam between Shell Course # 1 & 2""""",6968,0,0,32,0,540,540,32,240,0,240,,,,2013-01-27 19:00,2013-01-30 14:00,,2013-01-27 19:00,2013-01-30 14:00,2013-01-27 19:00,2013-01-30 14:00,2013-01-27 19:00,2013-01-30 14:00,2013-01-27 19:00,2013-01-30 14:00,,PT_Normal,,,,,4l3PltYgf0iP+XjMnKup5Q,sUyc0ELb1ki4P7ix77b7og,,,Y,0,0,,,2013-11-05 11:09,2013-11-05 11:09,admin,admin,
706,102423,4512,26246,6590,0,N,N,N,CP_Drtn,TT_Task,DT_FixedDUR2,TK_NotStart,JF721.713,Prepare Shell Course # 3 for Erection,6968,0,0,24,0,260,260,24,120,0,120,,,,2013-01-27 19:00,2013-01-29 16:00,,2013-01-27 19:00,2013-01-29 16:00,2013-01-27 19:00,2013-01-29 16:00,2013-01-27 19:00,2013-01-29 16:00,2013-01-27 19:00,2013-01-29 16:00,,PT_Normal,,,,,9/c6mnHxsUGHy9EN7qDEow,8AASL4v1k06BiIB/pADDng,,,Y,0,0,,,2013-11-05 11:09,2013-11-05 11:09,admin,admin,
707,102424,4512,26246,6590,0,N,N,N,CP_Drtn,TT_Task,DT_FixedDUR2,TK_NotStart,JF721.714,Erect & Tack Shell Course # 3,6968,0,0,32,0,520,520,32,240,0,240,,,,2013-01-29 16:00,2013-02-02 13:00,,2013-01-29 16:00,2013-02-02 13:00,2013-01-29 16:00,2013-02-02 13:00,2013-01-29 16:00,2013-02-02 13:00,2013-01-29 16:00,2013-02-02 13:00,,PT_Normal,,,,,jlvJjRxBgUSFhf0PP1Zq0Q,gsNf5zqwsE2gLlU6bfL/Nw,,,Y,0,0,,,2013-11-05 11:09,2013-11-05 11:09,admin,admin,
708,102425,4512,26246,6590,0,N,N,N,CP_Drtn,TT_Task,DT_FixedDUR2,TK_NotStart,JF721.715,Weld Outer Vertical Seam,6968,0,0,40,0,780,780,40,360,0,360,,,,2013-01-30 14:00,2013-02-04 09:00,,2013-01-30 14:00,2013-02-04 09:00,2013-01-30 14:00,2013-02-04 09:00,2013-01-30 14:00,2013-02-04 09:00,2013-01-30 14:00,2013-02-04 09:00,,PT_Normal,,,,,tIxoGrTZUk6SeTFJKOB8GQ,mnDy3cawHUWGQMRViNnHEg,,,Y,0,0,,,2013-11-05 11:09,2013-11-05 11:09,admin,admin,
709,102426,4512,26246,6590,0,N,N,N,CP_Drtn,TT_Task,DT_FixedDUR2,TK_NotStart,JF721.716,Backgouge & NDT Inside Vertical Seam,6968,0,0,32,0,540,540,32,240,0,240,,,,2013-01-31 12:00,2013-02-04 09:00,,2013-01-31 12:00,2013-02-04 09:00,2013-01-31 12:00,2013-02-04 09:00,2013-01-31 12:00,2013-02-04 09:00,2013-01-31 12:00,2013-02-04 09:00,,PT_Normal,,,,,zhonbwfiTECjABqVHWADSA,TJ7Pt0KlqkyDdKuYZApozg,,,Y,0,0,,,2013-11-05 11:09,2013-11-05 11:09,admin,admin,
710,102427,4512,26246,6590,0,N,N,N,CP_Drtn,TT_Task,DT_FixedDUR2,TK_NotStart,JF721.717,Weld Inside Vertical Seam,6968,0,0,32,0,500,500,32,240,0,240,,,,2013-02-01 12:30,2013-02-04 17:00,,2013-02-01 12:30,2013-02-04 17:00,2013-02-01 12:30,2013-02-04 17:00,2013-02-01 12:30,2013-02-04 17:00,2013-02-01 12:30,2013-02-04 17:00,,PT_Normal,,,,,lIPXJ0y0S0uOplzr4sVrWw,uHgTCkGX4EC7mXgU+bVjUw,,,Y,0,0,,,2013-11-05 11:09,2013-11-05 11:09,admin,admin,
711,102428,4512,26246,6590,0,N,N,N,CP_Drtn,TT_Task,DT_FixedDUR2,TK_NotStart,JF721.718,"""""Fit & Tack Horizontal Seam between Shell Course # 2 & 3""""",6968,0,0,32,0,500,500,32,240,0,240,,,,2013-02-02 13:00,2013-02-05 15:00,,2013-02-02 13:00,2013-02-05 15:00,2013-02-02 13:00,2013-02-05 15:00,2013-02-02 13:00,2013-02-05 15:00,2013-02-02 13:00,2013-02-05 15:00,,PT_Normal,,,,,eNIIc4/3IkqQc+cxAdBH/g,0Fpa1bbDfkO1HV8FRhudpw,,,Y,0,0,,,2013-11-05 11:09,2013-11-05 11:09,admin,admin,
712,102429,4512,26246,6590,0,N,N,N,CP_Drtn,TT_Task,DT_FixedDUR2,TK_NotStart,JF721.719,"""""Weld Outer Horizontal Seam between Shell Course # 2 & 3""""",6968,0,0,48,0,1000,1000,48,480,0,480,,,,2013-02-03 11:00,2013-02-08 11:30,,2013-02-03 11:00,2013-02-08 11:30,2013-02-03 11:00,2013-02-08 11:30,2013-02-03 11:00,2013-02-08 11:30,2013-02-03 11:00,2013-02-08 11:30,,PT_Normal,,,,,2poLnGbYK0my2wg+dusAyQ,ahlXcbBNnUOH3Ya+5vuoVQ,,,Y,0,0,,,2013-11-05 11:09,2013-11-05 11:09,admin,admin,
713,102430,4512,26246,6590,0,N,N,N,CP_Drtn,TT_Task,DT_FixedDUR2,TK_NotStart,JF721.720,"""""Backgouge & NDT Inside Horizontal Seam between Shell Course# 2 & 3""""",6968,0,0,32,0,540,540,32,240,0,240,,,,2013-02-04 09:00,2013-02-07 11:00,,2013-02-04 09:00,2013-02-07 11:00,2013-02-04 09:00,2013-02-07 11:00,2013-02-04 09:00,2013-02-07 11:00,2013-02-04 09:00,2013-02-07 11:00,,PT_Normal,,,,,MGxybQ1YEUCm8D850GgUIg,HhrHa5cwWUKxkpOy1B8c5g,,,Y,0,0,,,2013-11-05 11:09,2013-11-05 11:09,admin,admin,
714,102431,4512,26246,6590,0,N,N,N,CP_Drtn,TT_Task,DT_FixedDUR2,TK_NotStart,JF721.721,"Weld Inner Horizontal Seam between Shell Course # 2 & 3""""",6968,0,0,32,0,520,520,32,240,0,240,,,,2013-02-05 07:00,2013-02-08 11:30,,2013-02-05 07:00,2013-02-08 11:30,2013-02-05 07:00,2013-02-08 11:30,2013-02-05 07:00,2013-02-08 11:30,2013-02-05 07:00,2013-02-08 11:30,,PT_Normal,,,,,ffQ9swff9ECyynpnB4hNSw,h5xQ4m8eeEGNuQzzGrRSxA,,,Y,0,0,,,2013-11-05 11:09,2013-11-05 11:09,admin,admin,
715,102432,4512,26247,6590,0,N,N,N,CP_Drtn,TT_Task,DT_FixedDUR2,TK_NotStart,JF721.722,Prepare Shell Course # 4 for Erection,6968,0,0,24,0,260,260,24,120,0,120,,,,2013-02-08 11:30,2013-02-11 08:00,,2013-02-08 11:30,2013-02-11 08:00,2013-02-08 11:30,2013-02-11 08:00,2013-02-08 11:30,2013-02-11 08:00,2013-02-08 11:30,2013-02-11 08:00,,PT_Normal,,,,,YcE9nRFcdkiVJ5N3fm9hkA,pEhbXoqp+UK/8GB3N6qnKg,,,Y,0,0,,,2013-11-05 11:09,2013-11-05 11:09,admin,admin,
716,102433,4512,26247,6590,0,N,N,N,CP_Drtn,TT_Task,DT_FixedDUR2,TK_NotStart,JF721.723,Erect & Tack Shell Course # 4,6968,0,0,32,0,540,540,32,240,0,240,,,,2013-02-11 08:00,2013-02-14 10:00,,2013-02-11 08:00,2013-02-14 10:00,2013-02-11 08:00,2013-02-14 10:00,2013-02-11 08:00,2013-02-14 10:00,2013-02-11 08:00,2013-02-14 10:00,,PT_Normal,,,,,pZGuF3HvykCA0MK00ophHg,zqEFTtIB/Uij1YTqJIT/fA,,,Y,0,0,,,2013-11-05 11:09,2013-11-05 11:09,admin,admin,
717,102434,4512,26247,6590,0,N,N,N,CP_Drtn,TT_Task,DT_FixedDUR2,TK_NotStart,JF721.724,Weld Outer Vertical Seam,6968,0,0,40,0,780,780,40,360,0,360,,,,2013-02-11 16:00,2013-02-16 11:00,,2013-02-11 16:00,2013-02-16 11:00,2013-02-11 16:00,2013-02-16 11:00,2013-02-11 16:00,2013-02-16 11:00,2013-02-11 16:00,2013-02-16 11:00,,PT_Normal,,,,,wgbEAiaq10Oi9h8OQ92zGw,vnvGHSVRGUCm/HDpVARBMA,,,Y,0,0,,,2013-11-05 11:09,2013-11-05 11:09,admin,admin,
718,102435,4512,26247,6590,0,N,N,N,CP_Drtn,TT_Task,DT_FixedDUR2,TK_NotStart,JF721.725,Backgouge & NDT Inside Vertical Seam,6968,0,0,32,0,500,500,32,220,0,220,,,,2013-02-12 14:00,2013-02-16 11:00,,2013-02-12 14:00,2013-02-16 11:00,2013-02-12 14:00,2013-02-16 11:00,2013-02-12 14:00,2013-02-16 11:00,2013-02-12 14:00,2013-02-16 11:00,,PT_Normal,,,,,JuYFwbilW0eEcM9vFl8dkg,wq6YEPS+n0SbEnGllNpX1Q,,,Y,0,0,,,2013-11-05 11:09,2013-11-05 11:09,admin,admin,
719,102436,4512,26247,6590,0,N,N,N,CP_Drtn,TT_Task,DT_FixedDUR2,TK_NotStart,JF721.726,Weld Inside Vertical Seam,6968,0,0,32,0,520,520,32,220,0,220,,,,2013-02-13 12:00,2013-02-17 09:00,,2013-02-13 12:00,2013-02-17 09:00,2013-02-13 12:00,2013-02-17 09:00,2013-02-13 12:00,2013-02-17 09:00,2013-02-13 12:00,2013-02-17 09:00,,PT_Normal,,,,,enm7c+hHVkKX5LEV+np+qg,xNppXQnSaE6h4JzTvCsoQg,,,Y,0,0,,,2013-11-05 11:09,2013-11-05 11:09,admin,admin,
720,102437,4512,26247,6590,0,N,N,N,CP_Drtn,TT_Task,DT_FixedDUR2,TK_NotStart,JF721.727,"""""Fit & Tack Horizontal Seam between Shell Course # 3 & 4""""",6968,0,0,32,0,540,540,32,220,0,220,,,,2013-02-14 10:00,2013-02-17 17:00,,2013-02-14 10:00,2013-02-17 17:00,2013-02-14 10:00,2013-02-17 17:00,2013-02-14 10:00,2013-02-17 17:00,2013-02-14 10:00,2013-02-17 17:00,,PT_Normal,,,,,TeiU0EhSmECcpQVg5G3rEg,0FPcbobKEk2gDGHKJGGW6g,,,Y,0,0,,,2013-11-05 11:09,2013-11-05 11:09,admin,admin,
721,102438,4512,26247,6590,0,N,N,N,CP_Drtn,TT_Task,DT_FixedDUR2,TK_NotStart,JF721.728,Weld Outer Horizontal Seam between Shell Course # 3 & 4,6915,0,0,48,0,1040,1040,48,480,0,480,,,,2013-02-15 10:30,2013-02-20 11:00,,2013-02-15 10:30,2013-02-20 11:00,2013-02-15 10:30,2013-02-20 11:00,2013-02-15 10:30,2013-02-20 11:00,2013-02-15 10:30,2013-02-20 11:00,,PT_Normal,,,,,cJe3LACpKkSHe47eLjcX5w,8kB5x2PPMUa0WYhL5QQKfQ,,,Y,0,0,,,2013-11-05 11:09,2013-11-05 11:09,admin,admin,
722,102439,4512,26247,6590,0,N,N,N,CP_Drtn,TT_Task,DT_FixedDUR2,TK_NotStart,JF721.729,"""""Backgouge & NDT Inside Horizontal Seam between Shell Course# 3 & 4""""",6968,0,0,32,0,520,520,32,240,0,240,,,,2013-02-16 11:00,2013-02-19 13:00,,2013-02-16 11:00,2013-02-19 13:00,2013-02-16 11:00,2013-02-19 13:00,2013-02-16 11:00,2013-02-19 13:00,2013-02-16 11:00,2013-02-19 13:00,,PT_Normal,,,,,JYbBtFfq4ES7bG5Vx8rnww,fkTSL5wJr0e3OpWOpI6P+Q,,,Y,0,0,,,2013-11-05 11:09,2013-11-05 11:09,admin,admin,
723,102440,4512,26247,6590,0,N,N,N,CP_Drtn,TT_Task,DT_FixedDUR2,TK_NotStart,JF721.730,"Weld Inner Horizontal Seam between Shell Course # 3 & 4""""",6968,0,0,32,0,520,520,32,240,0,240,,,,2013-02-17 09:00,2013-02-20 11:00,,2013-02-17 09:00,2013-02-20 11:00,2013-02-17 09:00,2013-02-20 11:00,2013-02-17 09:00,2013-02-20 11:00,2013-02-17 09:00,2013-02-20 11:00,,PT_Normal,,,,,1CWXhzkPTU+3Zyu+YjEvjg,E04mfgs/IkmGoXk3d4cllA,,,Y,0,0,,,2013-11-05 11:09,2013-11-05 11:09,admin,admin,
724,102441,4512,26247,6590,0,N,N,N,CP_Drtn,TT_Task,DT_FixedDUR2,TK_NotStart,JF721.731,"Fit, Weld Shell Course # 1 Annular Plate & Oil Test",6968,176,176,64,0,1620,1620,64,780,0,780,,,,2013-02-08 11:30,2013-02-15 10:30,,2013-01-21 11:00,2013-01-27 19:00,2013-01-21 11:00,2013-01-27 19:00,2013-01-21 11:00,2013-01-27 19:00,2013-02-08 11:30,2013-02-15 10:30,,PT_Normal,,,,,/JvUyWEBZ0Gbr+zbX3Iyag,hvPYL3f0Bkq0qzB6OfkOgA,,,N,0,0,,,2013-11-05 11:09,2013-11-05 11:09,admin,admin,
725,102442,4512,26248,6590,0,N,N,N,CP_Drtn,TT_Task,DT_FixedDUR2,TK_NotStart,JF721.732,Erect & Tack Curve Angle,6942,0,0,32,0,560,560,32,220,0,220,,,,2013-02-13 12:00,2013-02-17 09:00,,2013-02-13 12:00,2013-02-17 09:00,2013-02-13 12:00,2013-02-17 09:00,2013-02-13 12:00,2013-02-17 09:00,2013-02-13 12:00,2013-02-17 09:00,,PT_Normal,,,,,MfwQNbXmME6Ty6nFiZzHPg,264/9RFIFU2QE4QIYg3NZQ,,,Y,0,0,,,2013-11-05 11:09,2013-11-05 11:09,admin,admin,
726,102443,4512,26248,6590,0,N,N,N,CP_Drtn,TT_Task,DT_FixedDUR2,TK_NotStart,JF721.733,Weld Curve Angle,6968,0,0,64,0,920,920,64,360,0,360,,,,2013-02-17 09:00,2013-02-24 08:00,,2013-02-17 09:00,2013-02-24 08:00,2013-02-17 09:00,2013-02-24 08:00,2013-02-17 09:00,2013-02-24 08:00,2013-02-17 09:00,2013-02-24 08:00,,PT_Normal,,,,,WgQ1AJ86/U2MN4e419xlLQ,tDxpS/6k5EqlBlh1RVcTpQ,,,Y,0,0,,,2013-11-05 11:09,2013-11-05 11:09,admin,admin,
727,102444,4512,26249,6590,0,N,N,N,CP_Drtn,TT_Task,DT_FixedDUR2,TK_NotStart,JF721.734,MArk & Cut Holes,6968,0,0,40,0,660,660,40,270,0,270,,,,2013-02-17 09:00,2013-02-21 09:00,,2013-02-17 09:00,2013-02-21 09:00,2013-02-17 09:00,2013-02-21 09:00,2013-02-17 09:00,2013-02-21 09:00,2013-02-17 09:00,2013-02-21 09:00,,PT_Normal,,,,,EcqpMC2ftUiPMbMbkv8XgA,6VvP1/Eetk+woPcIHEWyug,,,Y,0,0,,,2013-11-05 11:09,2013-11-05 11:09,admin,admin,
728,102445,4512,26249,6590,0,N,N,N,CP_Drtn,TT_Task,DT_FixedDUR2,TK_NotStart,JF721.735,"Fit & Tack Manholes ,Nozzles on Shell",6968,0,0,32,0,440,440,32,160,0,160,,,,2013-02-18 07:00,2013-02-21 09:00,,2013-02-18 07:00,2013-02-21 09:00,2013-02-18 07:00,2013-02-21 09:00,2013-02-18 07:00,2013-02-21 09:00,2013-02-18 07:00,2013-02-21 09:00,,PT_Normal,,,,,rQADrvWVUE+bSvt2fRRmzg,qCEIwoHwLUC3nsLXctHAiw,,,Y,0,0,,,2013-11-05 11:09,2013-11-05 11:09,admin,admin,
729,102446,4512,26249,6590,0,N,N,N,CP_Drtn,TT_Task,DT_FixedDUR2,TK_NotStart,JF721.736,Weld MAnholes & Nozzles on shell,6968,0,0,56,0,950,950,56,300,0,300,,,,2013-02-18 15:00,2013-02-24 16:00,,2013-02-18 15:00,2013-02-24 16:00,2013-02-18 15:00,2013-02-24 16:00,2013-02-18 15:00,2013-02-24 16:00,2013-02-18 15:00,2013-02-24 16:00,,PT_Normal,,,,,jxinNnSBHUOfPQfhmQ4MZg,cSsrqJmAIEWOyweknl0kig,,,Y,0,0,,,2013-11-05 11:09,2013-11-05 11:09,admin,admin,
730,102447,4512,26249,6590,0,N,N,N,CP_Drtn,TT_Task,DT_FixedDUR2,TK_NotStart,JF721.737,NDT on Manholes & Nozzles on shell,6968,0,0,24,0,190,190,24,60,0,60,,,,2013-02-24 16:00,2013-02-27 10:00,,2013-02-24 16:00,2013-02-27 10:00,2013-02-24 16:00,2013-02-27 10:00,2013-02-24 16:00,2013-02-27 10:00,2013-02-24 16:00,2013-02-27 10:00,,PT_Normal,,,,,Am0+O0D7jEm+iJlJOB7kjA,4n51B10SOkuPho+tEFqXAw,,,Y,0,0,,,2013-11-05 11:09,2013-11-05 11:09,admin,admin,
731,102448,4512,26250,6590,0,N,N,N,CP_Drtn,TT_Task,DT_FixedDUR2,TK_NotStart,JF721.738,Prepare Tank for Roof Contruction,6968,0,0,32,0,400,400,32,120,0,120,,,,2013-02-24 16:00,2013-02-28 08:00,,2013-02-24 16:00,2013-02-28 08:00,2013-02-24 16:00,2013-02-28 08:00,2013-02-24 16:00,2013-02-28 08:00,2013-02-24 16:00,2013-02-28 08:00,,PT_Normal,,,,,mhHkSp1nRE2H2huVHIKzRg,JuUI7e/+Eky2SSzpB+73Rg,,,Y,0,0,,,2013-11-05 11:09,2013-11-05 11:09,admin,admin,
732,102449,4512,26250,6590,0,N,N,N,CP_Drtn,TT_Task,DT_FixedDUR2,TK_NotStart,JF721.739,Install Shoe Support Structure on Shell,6968,0,0,64,0,1200,1200,64,360,0,360,,,,2013-02-28 08:00,2013-03-06 17:00,,2013-02-28 08:00,2013-03-06 17:00,2013-02-28 08:00,2013-03-06 17:00,2013-02-28 08:00,2013-03-06 17:00,2013-02-28 08:00,2013-03-06 17:00,,PT_Normal,,,,,1gTnn60xqkSSBx2ppCODnA,AjFchk4KOUOduILNuX9m8w,,,Y,0,0,,,2013-11-05 11:09,2013-11-05 11:09,admin,admin,
733,102450,4512,26250,6590,0,N,N,N,CP_Drtn,TT_Task,DT_FixedDUR2,TK_NotStart,JF721.740,Install / Assemble Roof Rafters,6968,0,0,160,0,4000,4000,160,1200,0,1200,,,,2013-03-07 07:00,2013-03-24 12:00,,2013-03-07 07:00,2013-03-24 12:00,2013-03-07 07:00,2013-03-24 12:00,2013-03-07 07:00,2013-03-24 12:00,2013-03-07 07:00,2013-03-24 12:00,,PT_Normal,,,,,VBGlZOwGRUyb1c8OLQpbjA,UW8rCbwa4EW7OWp1pJCa7Q,,,Y,0,0,,,2013-11-05 11:09,2013-11-05 11:09,admin,admin,
734,102451,4512,26250,6590,0,N,N,N,CP_Drtn,TT_Task,DT_FixedDUR2,TK_NotStart,JF721.741,Installation of Roof Plates,6968,0,0,120,0,2850,2850,120,900,0,900,,,,2013-03-24 12:00,2013-04-06 12:00,,2013-03-24 12:00,2013-04-06 12:00,2013-03-24 12:00,2013-04-06 12:00,2013-03-24 12:00,2013-04-06 12:00,2013-03-24 12:00,2013-04-06 12:00,,PT_Normal,,,,,ooVWdamKVkqyQAghSPHFGg,K+MXqaqAaEWcKhGbBseJOQ,,,Y,0,0,,,2013-11-05 11:09,2013-11-05 11:09,admin,admin,
735,102452,4512,26250,6590,0,N,N,N,CP_Drtn,TT_Task,DT_FixedDUR2,TK_NotStart,JF721.742,Install Roof Manholes & Nozzles,6968,0,0,56,0,590,590,56,200,0,200,,,,2013-04-06 12:00,2013-04-12 10:30,,2013-04-06 12:00,2013-04-12 10:30,2013-04-06 12:00,2013-04-12 10:30,2013-04-06 12:00,2013-04-12 10:30,2013-04-06 12:00,2013-04-12 10:30,,PT_Normal,,,,,ruPy35B3vUmrAOljNJhaNQ,LRSeid90Ikus+lDgvPcPaw,,,Y,0,0,,,2013-11-05 11:09,2013-11-05 11:09,admin,admin,
736,102453,4512,26251,6590,0,N,N,N,CP_Drtn,TT_Task,DT_FixedDUR2,TK_NotStart,JF721.743,"Erect & Fix Stairs, Handrails & Platforms on Shell",6968,0,0,32,0,680,680,32,200,0,200,,,,2013-04-12 10:30,2013-04-15 15:00,,2013-04-12 10:30,2013-04-15 15:00,2013-04-12 10:30,2013-04-15 15:00,2013-04-12 10:30,2013-04-15 15:00,2013-04-12 10:30,2013-04-15 15:00,,PT_Normal,,,,,hBeibm1R4USdYy06fWYQWA,ifBqZQcGI0uMIB0OwYDi0g,,,Y,0,0,,,2013-11-05 11:09,2013-11-05 11:09,admin,admin,
737,102454,4512,26251,6590,0,N,N,N,CP_Drtn,TT_Task,DT_FixedDUR2,TK_NotStart,JF721.744,Erect & Fix Roof Platforms & Handrails,6968,0,0,40,0,850,850,40,250,0,250,,,,2013-04-15 15:00,2013-04-20 10:00,,2013-04-15 15:00,2013-04-20 10:00,2013-04-15 15:00,2013-04-20 10:00,2013-04-15 15:00,2013-04-20 10:00,2013-04-15 15:00,2013-04-20 10:00,,PT_Normal,,,,,vUj6m6H8XUaZ6EXTLwrzRQ,ZjjMFrhklEeFjF36ulwagw,,,Y,0,0,,,2013-11-05 11:09,2013-11-05 11:09,admin,admin,
738,102455,4512,26252,6590,0,N,N,N,CP_Drtn,TT_Task,DT_FixedDUR2,TK_NotStart,JF721.745,Install Blind Flanges,6968,0,0,24,0,180,180,24,50,0,50,,,,2013-04-20 10:00,2013-04-22 14:00,,2013-04-20 10:00,2013-04-22 14:00,2013-04-20 10:00,2013-04-22 14:00,2013-04-20 10:00,2013-04-22 14:00,2013-04-20 10:00,2013-04-22 14:00,,PT_Normal,,,,,8ozOY53Sl0+qFmurATYv7Q,wIYsIVQTo06MHvOnMAaKVw,,,Y,0,0,,,2013-11-05 11:09,2013-11-05 11:09,admin,admin,
739,102456,4512,26252,6590,0,N,N,N,CP_Drtn,TT_Task,DT_FixedDUR2,TK_NotStart,JF721.746,Tank Water Filling,6966,0,0,200,0,2300,2300,200,1150,0,1150,,,,2013-04-22 14:00,2013-05-14 09:00,,2013-04-22 14:00,2013-05-14 09:00,2013-04-22 14:00,2013-05-14 09:00,2013-04-22 14:00,2013-05-14 09:00,2013-04-22 14:00,2013-05-14 09:00,,PT_Normal,,,,,ztyHkJwSG0S+dqMUH45dIA,72NAN0UMPki1ck/LrKCVRw,,,Y,0,0,,,2013-11-05 11:09,2013-11-05 11:09,admin,admin,
740,102457,4512,26252,6590,0,N,N,N,CP_Drtn,TT_Task,DT_FixedDUR2,TK_NotStart,JF721.747,Hold Water for 48 Hours,6928,0,0,32,0,180,180,32,80,0,80,,,,2013-05-14 09:00,2013-05-17 13:30,,2013-05-14 09:00,2013-05-17 13:30,2013-05-14 09:00,2013-05-17 13:30,2013-05-14 09:00,2013-05-17 13:30,2013-05-14 09:00,2013-05-17 13:30,,PT_Normal,,,,,PxUlpqwfPEiaQt/LvEwb7w,jg2o1E3Vi0qAf0ymsCl4iw,,,Y,0,0,,,2013-11-05 11:09,2013-11-05 11:09,admin,admin,
741,102458,4512,26252,6590,0,N,N,N,CP_Drtn,TT_Task,DT_FixedDUR2,TK_NotStart,JF721.748,Drain Water from Tank,6951,0,0,112,0,1560,1560,112,480,0,480,,,,2013-05-17 13:30,2013-05-29 13:00,,2013-05-17 13:30,2013-05-29 13:00,2013-05-17 13:30,2013-05-29 13:00,2013-05-17 13:30,2013-05-29 13:00,2013-05-17 13:30,2013-05-29 13:00,,PT_Normal,,,,,Ul+EH6hzoky+PLKqpxtPjw,qldEUK5Jp0Sp3gp41wgJgg,,,Y,0,0,,,2013-11-05 11:09,2013-11-05 11:09,admin,admin,
742,102459,4512,26252,6590,0,N,N,N,CP_Drtn,TT_Task,DT_FixedDUR2,TK_NotStart,JF721.749,Clean & Dry Out Tank,6928,0,0,32,0,260,260,32,60,0,60,,,,2013-05-29 13:00,2013-06-02 10:00,,2013-05-29 13:00,2013-06-02 10:00,2013-05-29 13:00,2013-06-02 10:00,2013-05-29 13:00,2013-06-02 10:00,2013-05-29 13:00,2013-06-02 10:00,,PT_Normal,,,,,mLUMkOWBHEy0Ml0OWLYt5g,aHD29ifABEapv3640O8Gew,,,Y,0,0,,,2013-11-05 11:09,2013-11-05 11:09,admin,admin,
743,102460,4512,26253,6590,0,N,N,N,CP_Drtn,TT_Task,DT_FixedDUR2,TK_NotStart,JF721.750,Erect  Scafolding Outside Tank,6966,40,0,64,0,1040,1040,64,320,0,320,,,,2013-05-21 16:00,2013-05-28 15:00,,2013-05-17 13:30,2013-05-24 12:30,2013-05-17 13:30,2013-05-24 12:30,2013-05-17 13:30,2013-05-24 12:30,2013-05-21 16:00,2013-05-28 15:00,,PT_Normal,,,,,vCAeln+A2kiLOPhlrkidiQ,ZJoLidF+IU6woxt2rwnscA,,,N,0,0,,,2013-11-05 11:09,2013-11-05 11:09,admin,admin,
744,102461,4512,26253,6590,0,N,N,N,CP_Drtn,TT_Task,DT_FixedDUR2,TK_NotStart,JF721.751,External Shell Blast & Prime,6950,40,0,32,0,720,720,32,120,0,120,,,,2013-05-28 15:00,2013-06-01 12:00,,2013-05-24 12:30,2013-05-27 17:00,2013-05-24 12:30,2013-05-27 17:00,2013-05-24 12:30,2013-05-27 17:00,2013-05-28 15:00,2013-06-01 12:00,,PT_Normal,,,,,qfFSJnnlLE2ryiXkVKwyFw,8XQ+e2zkzUi+PwxVOfet3Q,,,N,0,0,,,2013-11-05 11:09,2013-11-05 11:09,admin,admin,
745,102462,4512,26253,6590,0,N,N,N,CP_Drtn,TT_Task,DT_FixedDUR2,TK_NotStart,JF721.752,External Shell Secondary & Final Coat,6965,40,0,32,0,640,640,32,160,0,160,,,,2013-05-29 13:00,2013-06-02 10:00,,2013-05-25 13:00,2013-05-28 15:00,2013-05-25 13:00,2013-05-28 15:00,2013-05-25 13:00,2013-05-28 15:00,2013-05-29 13:00,2013-06-02 10:00,,PT_Normal,,,,,kiixaWAzX0iraqu74oaoKw,Tij5AVVH0EOYCNnyGxg08w,,,N,0,0,,,2013-11-05 11:09,2013-11-05 11:09,admin,admin,
746,102463,4512,26253,6590,0,N,N,N,CP_Drtn,TT_Task,DT_FixedDUR2,TK_NotStart,JF721.753,External Shell Paint Inspection,6935,40,0,8,0,160,160,8,40,0,40,,,,2013-06-02 10:00,2013-06-03 08:00,,2013-05-28 15:00,2013-05-29 13:00,2013-05-28 15:00,2013-05-29 13:00,2013-05-28 15:00,2013-05-29 13:00,2013-06-02 10:00,2013-06-03 08:00,,PT_Normal,,,,,LASSucyk/kiuZUo/uMvC5w,lkbhoStF50WVAl4gbubVLw,,,N,0,0,,,2013-11-05 11:09,2013-11-05 11:09,admin,admin,
747,102464,4512,26253,6590,0,N,N,N,CP_Drtn,TT_Task,DT_FixedDUR2,TK_NotStart,JF721.754,Dismantle External Scaffolding,6957,40,40,16,0,400,400,16,40,0,40,,,,2013-06-03 08:00,2013-06-04 14:00,,2013-05-29 13:00,2013-05-31 11:30,2013-05-29 13:00,2013-05-31 11:30,2013-05-29 13:00,2013-05-31 11:30,2013-06-03 08:00,2013-06-04 14:00,,PT_Normal,,,,,Gal8SnSXok2DRY16OCVrjQ,odHNHxeyjUCrDcZAWZfJyw,,,N,0,0,,,2013-11-05 11:09,2013-11-05 11:09,admin,admin,
748,102465,4512,26254,6590,0,N,N,N,CP_Drtn,TT_Task,DT_FixedDUR2,TK_NotStart,JF721.755,Erect Scafolding Inside Tank,6942,0,0,64,0,980,980,64,180,0,180,,,,2013-06-02 10:00,2013-06-09 09:00,,2013-06-02 10:00,2013-06-09 09:00,2013-06-02 10:00,2013-06-09 09:00,2013-06-02 10:00,2013-06-09 09:00,2013-06-02 10:00,2013-06-09 09:00,,PT_Normal,,,,,PUmKgvJ6bkWlGS9LxmynDQ,ycAVDiwKQUmWV6v1KIt/Ww,,,Y,0,0,,,2013-11-05 11:09,2013-11-05 11:09,admin,admin,
749,102466,4512,26254,6590,0,N,N,N,CP_Drtn,TT_Task,DT_FixedDUR2,TK_NotStart,JF721.756,Internal Shell Blast & Prime,6949,0,0,40,0,510,510,40,90,0,90,,,,2013-06-04 14:00,2013-06-09 09:00,,2013-06-04 14:00,2013-06-09 09:00,2013-06-04 14:00,2013-06-09 09:00,2013-06-04 14:00,2013-06-09 09:00,2013-06-04 14:00,2013-06-09 09:00,,PT_Normal,,,,,p2czh0y3xEqqlOj/YRBbZg,cmdCQPpNqUS/HM1fkBQYkA,,,Y,0,0,,,2013-11-05 11:09,2013-11-05 11:09,admin,admin,
750,102467,4512,26254,6590,0,N,N,N,CP_Drtn,TT_Task,DT_FixedDUR2,TK_NotStart,JF721.757,Internal Shell Secondary & Final Coat,6950,0,0,40,0,480,480,40,120,0,120,,,,2013-06-09 09:00,2013-06-13 09:00,,2013-06-09 09:00,2013-06-13 09:00,2013-06-09 09:00,2013-06-13 09:00,2013-06-09 09:00,2013-06-13 09:00,2013-06-09 09:00,2013-06-13 09:00,,PT_Normal,,,,,PGy9SbjR0kGPh/TFh1BSsQ,pCMVoiusc0Ko5ykyJcrV8Q,,,Y,0,0,,,2013-11-05 11:09,2013-11-05 11:09,admin,admin,
751,102468,4512,26254,6590,0,N,N,N,CP_Drtn,TT_Task,DT_FixedDUR2,TK_NotStart,JF721.758,Internal Shell Paint Inspection,6958,0,0,24,0,150,150,24,40,0,40,,,,2013-06-09 09:00,2013-06-11 13:00,,2013-06-09 09:00,2013-06-11 13:00,2013-06-09 09:00,2013-06-11 13:00,2013-06-09 09:00,2013-06-11 13:00,2013-06-09 09:00,2013-06-11 13:00,,PT_Normal,,,,,munlVuowBkmZWRCMOHDv8Q,o/1SMCAT4k2JkwSD1Q8vbQ,,,Y,0,0,,,2013-11-05 11:09,2013-11-05 11:09,admin,admin,
752,102469,4512,26254,6590,0,N,N,N,CP_Drtn,TT_Task,DT_FixedDUR2,TK_NotStart,JF721.759,Dismantle Internal Scaffolding,6942,0,0,48,0,920,920,48,160,0,160,,,,2013-06-11 13:00,2013-06-16 16:00,,2013-06-11 13:00,2013-06-16 16:00,2013-06-11 13:00,2013-06-16 16:00,2013-06-11 13:00,2013-06-16 16:00,2013-06-11 13:00,2013-06-16 16:00,,PT_Normal,,,,,xmA/IBSWXky2CQzM+t/Fnw,tJFq905MjUSg9ePp2mgiBA,,,Y,0,0,,,2013-11-05 11:09,2013-11-05 11:09,admin,admin,
753,102470,4512,26254,6590,0,N,N,N,CP_Drtn,TT_Task,DT_FixedDUR2,TK_NotStart,JF721.760,Bottom/Annular Plate Blast & Prime,6949,0,0,32,0,320,320,32,80,0,80,,,,2013-06-16 16:00,2013-06-20 08:00,,2013-06-16 16:00,2013-06-20 08:00,2013-06-16 16:00,2013-06-20 08:00,2013-06-16 16:00,2013-06-20 08:00,2013-06-16 16:00,2013-06-20 08:00,,PT_Normal,,,,,WKAmtrgiokS54SoFDpjGiA,URHVzVDL8EejvFLuQCveDA,,,Y,0,0,,,2013-11-05 11:09,2013-11-05 11:09,admin,admin,
754,102471,4512,26254,6590,0,N,N,N,CP_Drtn,TT_Task,DT_FixedDUR2,TK_NotStart,JF721.761,Bottom/Annular Plate Secondary & Final Coat,6950,0,0,32,0,320,320,32,80,0,80,,,,2013-06-20 08:00,2013-06-23 15:00,,2013-06-20 08:00,2013-06-23 15:00,2013-06-20 08:00,2013-06-23 15:00,2013-06-20 08:00,2013-06-23 15:00,2013-06-20 08:00,2013-06-23 15:00,,PT_Normal,,,,,P3yWVxV9LkiUKreaVcFqpg,m5ltdMj360SumiF0UTwZ0g,,,Y,0,0,,,2013-11-05 11:09,2013-11-05 11:09,admin,admin,
755,102472,4512,26254,6590,0,N,N,N,CP_Drtn,TT_Task,DT_FixedDUR2,TK_NotStart,JF721.762,Bottom/Annular Plate Paint Inspection,6942,0,0,24,0,160,160,24,40,0,40,,,,2013-06-23 15:00,2013-06-26 09:00,,2013-06-23 15:00,2013-06-26 09:00,2013-06-23 15:00,2013-06-26 09:00,2013-06-23 15:00,2013-06-26 09:00,2013-06-23 15:00,2013-06-26 09:00,,PT_Normal,,,,,wNPrI8IkJ02/HsYXap0iKw,XJRtEPLhfUOigEAcsjOXrw,,,Y,0,0,,,2013-11-05 11:09,2013-11-05 11:09,admin,admin,
756,102473,4512,26255,6590,0,N,N,N,CP_Drtn,TT_Task,DT_FixedDUR2,TK_NotStart,JF721.763,Tanks lighting,6942,0,0,16,0,180,180,16,60,0,60,,,,2013-08-05 07:00,2013-08-06 13:00,,2013-08-05 07:00,2013-08-06 13:00,2013-08-05 07:00,2013-08-06 13:00,2013-08-05 07:00,2013-08-06 13:00,2013-08-05 07:00,2013-08-06 13:00,,PT_Normal,,,,,ca/mkQsycEK9yo2dEohOXg,h9t22LMDDUyWlfSmoCeGfw,,,Y,0,0,,,2013-11-05 11:09,2013-11-05 11:09,admin,admin,
757,102474,4512,26255,6590,0,N,N,N,CP_Drtn,TT_Task,DT_FixedDUR2,TK_NotStart,JF721.764,Tanks lighting  protection,6942,0,0,24,0,330,330,24,120,0,120,,,,2013-08-06 13:00,2013-08-08 17:00,,2013-08-06 13:00,2013-08-08 17:00,2013-08-06 13:00,2013-08-08 17:00,2013-08-06 13:00,2013-08-08 17:00,2013-08-06 13:00,2013-08-08 17:00,,PT_Normal,,,,,X7yVRU3Zb066Frl5PUfCgA,ncsuAuLOhUGLOjw/8tHHhw,,,Y,0,0,,,2013-11-05 11:09,2013-11-05 11:09,admin,admin,
758,102475,4512,26255,6590,0,N,N,N,CP_Drtn,TT_Task,DT_FixedDUR2,TK_NotStart,JF721.765,Grounding system,6942,0,0,16,0,300,300,16,120,0,120,,,,2013-08-09 09:30,2013-08-11 08:00,,2013-08-09 09:30,2013-08-11 08:00,2013-08-09 09:30,2013-08-11 08:00,2013-08-09 09:30,2013-08-11 08:00,2013-08-09 09:30,2013-08-11 08:00,,PT_Normal,,,,,/k7BGAd110+QwZhjVAPh+w,N32ujtYEVU+bNCKyx8+ZUw,,,Y,0,0,,,2013-11-05 11:09,2013-11-05 11:09,admin,admin,
759,102476,4512,26256,6590,0,N,N,N,CP_Drtn,TT_Task,DT_FixedDUR2,TK_NotStart,JF721.766,Concrete testing,6916,0,0,8,0,220,220,8,80,0,80,,,,2013-08-11 08:00,2013-08-11 16:00,,2013-08-11 08:00,2013-08-11 16:00,2013-08-11 08:00,2013-08-11 16:00,2013-08-11 08:00,2013-08-11 16:00,2013-08-11 08:00,2013-08-11 16:00,,PT_Normal,,,,,7r7cncGvzUeGAHQimQWh1w,8KWZlQ2nDUq+fDRxXlZ4Rg,,,Y,0,0,,,2013-11-05 11:09,2013-11-05 11:09,admin,admin,
760,102477,4512,26256,6590,0,N,N,N,CP_Drtn,TT_Task,DT_FixedDUR2,TK_NotStart,JF721.767,RT testing for the welding,6942,0,0,8,0,220,220,8,80,0,80,,,,2013-08-11 16:00,2013-08-12 14:00,,2013-08-11 16:00,2013-08-12 14:00,2013-08-11 16:00,2013-08-12 14:00,2013-08-11 16:00,2013-08-12 14:00,2013-08-11 16:00,2013-08-12 14:00,,PT_Normal,,,,,Ond/6WhYc0KdoN3s3WttYw,VPXRHMD7NEaYe4XZa7Q0Jw,,,Y,0,0,,,2013-11-05 11:09,2013-11-05 11:09,admin,admin,
761,102478,4512,26256,6590,0,N,N,N,CP_Drtn,TT_Task,DT_FixedDUR2,TK_NotStart,JF721.768,Sand testing,6915,0,0,8,0,110,110,8,40,0,40,,,,2013-08-12 14:00,2013-08-13 12:00,,2013-08-12 14:00,2013-08-13 12:00,2013-08-12 14:00,2013-08-13 12:00,2013-08-12 14:00,2013-08-13 12:00,2013-08-12 14:00,2013-08-13 12:00,,PT_Normal,,,,,k+rMm5U/SUihO6O1f14sCw,mxny6NnxS0WqeqW3LOiyPQ,,,Y,0,0,,,2013-11-05 11:09,2013-11-05 11:09,admin,admin,
762,102479,4512,26256,6590,0,N,N,N,CP_Drtn,TT_Task,DT_FixedDUR2,TK_NotStart,JF721.769,Tank Calibration,6965,0,0,8,0,110,110,8,40,0,40,,,,2013-08-13 12:00,2013-08-14 10:00,,2013-08-13 12:00,2013-08-14 10:00,2013-08-13 12:00,2013-08-14 10:00,2013-08-13 12:00,2013-08-14 10:00,2013-08-13 12:00,2013-08-14 10:00,,PT_Normal,,,,,BOTnf9UyqEiSI6Bq+cuPKA,t+QAezsxRUadM9hg+8O4jw,,,Y,0,0,,,2013-11-05 11:09,2013-11-05 11:09,admin,admin,
763,102480,4512,26257,6590,0,N,N,N,CP_Drtn,TT_Task,DT_FixedDUR2,TK_NotStart,JF721.770,Final Inspection & Hand over to client,6915,0,0,8,0,270,270,8,120,0,120,,,,2013-08-14 10:00,2013-08-15 08:00,,2013-08-14 10:00,2013-08-15 08:00,2013-08-14 10:00,2013-08-15 08:00,2013-08-14 10:00,2013-08-15 08:00,2013-08-14 10:00,2013-08-15 08:00,,PT_Normal,,,,,GbxHwbode0a1BQN9nVm8iQ,NxUQDchjrk+CZqM47f/HXw,,,Y,0,0,,,2013-11-05 11:09,2013-11-05 11:09,admin,admin,
764,102481,4512,26258,6590,0,N,N,N,CP_Drtn,TT_FinMile,DT_FixedDrtn,TK_NotStart,5.7,Complete MOBILIZATION of camp with Catering and accommodation facilities,,0,0,0,0,0,0,0,0,0,0,,,,2012-10-04 14:00,2012-10-04 14:00,,2012-10-04 14:00,2012-10-04 14:00,2012-10-04 14:00,2012-10-04 14:00,2012-10-04 14:00,2012-10-04 14:00,2012-10-04 14:00,2012-10-04 14:00,,PT_Normal,,,,,06wC9q5Ux0KInpCUtxS3gw,,,,Y,0,0,,,2013-11-05 11:09,2013-11-05 11:09,admin,admin,
765,102482,4512,26259,6590,0,N,N,N,CP_Drtn,TT_FinMile,DT_FixedDrtn,TK_NotStart,5.9,Complete COnstruction of Civil/Structural works,,0,0,0,0,0,0,0,0,0,0,,,,2012-11-20 10:00,2012-11-20 10:00,,2012-11-20 10:00,2012-11-20 10:00,2012-11-20 10:00,2012-11-20 10:00,2012-11-20 10:00,2012-11-20 10:00,2012-11-20 10:00,2012-11-20 10:00,,PT_Normal,,,,,V2XIc0H+bkyzUjJa3r1pWQ,,,,Y,0,0,,,2013-11-05 11:09,2013-11-05 11:09,admin,admin,
766,102483,4512,26260,6590,0,N,N,N,CP_Drtn,TT_FinMile,DT_FixedDrtn,TK_NotStart,2.E,MCC,,0,0,0,0,0,0,0,0,0,0,,,,2013-04-20 10:00,2013-04-20 10:00,,2013-04-20 10:00,2013-04-20 10:00,2013-04-20 10:00,2013-04-20 10:00,2013-04-20 10:00,2013-04-20 10:00,2013-04-20 10:00,2013-04-20 10:00,,PT_Normal,,,,,sIOyjhE8y0qjCdZ0EksVqw,,,,Y,0,0,,,2013-11-05 11:09,2013-11-05 11:09,admin,admin,
767,102484,4512,26261,6590,0,N,N,N,CP_Drtn,TT_FinMile,DT_FixedDrtn,TK_NotStart,4.E,Final Testing,,0,0,0,0,0,0,0,0,0,0,,,,2013-06-02 10:00,2013-06-02 10:00,,2013-06-02 10:00,2013-06-02 10:00,2013-06-02 10:00,2013-06-02 10:00,2013-06-02 10:00,2013-06-02 10:00,2013-06-02 10:00,2013-06-02 10:00,,PT_Normal,,,,,R6mfVZ9r4k+4y88EmwKoEA,,,,Y,0,0,,,2013-11-05 11:09,2013-11-05 11:09,admin,admin,
768,102485,4512,26262,6590,0,N,N,N,CP_Drtn,TT_FinMile,DT_FixedDrtn,TK_NotStart,5.10,Complete Installation,,0,0,0,0,0,0,0,0,0,0,,,,2013-08-11 08:00,2013-08-11 08:00,,2013-08-11 08:00,2013-08-11 08:00,2013-08-11 08:00,2013-08-11 08:00,2013-08-11 08:00,2013-08-11 08:00,2013-08-11 08:00,2013-08-11 08:00,,PT_Normal,,,,,HbD9JfzOhE6QX9CGwn1lJg,,,,Y,0,0,,,2013-11-05 11:09,2013-11-05 11:09,admin,admin,
769,102486,4512,26263,6590,0,N,N,N,CP_Drtn,TT_FinMile,DT_FixedDrtn,TK_NotStart,3.E,THird party testing,,0,0,0,0,0,0,0,0,0,0,,,,2013-08-14 10:00,2013-08-14 10:00,,2013-08-14 10:00,2013-08-14 10:00,2013-08-14 10:00,2013-08-14 10:00,2013-08-14 10:00,2013-08-14 10:00,2013-08-14 10:00,2013-08-14 10:00,,PT_Normal,,,,,oi2CMrSAlkGRLtJXSID3qg,,,,Y,0,0,,,2013-11-05 11:09,2013-11-05 11:09,admin,admin,
770,102487,4512,26264,6590,0,N,N,N,CP_Drtn,TT_FinMile,DT_FixedDrtn,TK_NotStart,6.E,Project Completion,,0,0,0,0,0,0,0,0,0,0,,,,2013-08-15 08:00,2013-08-15 08:00,,2013-08-15 08:00,2013-08-15 08:00,2013-08-15 08:00,2013-08-15 08:00,2013-08-15 08:00,2013-08-15 08:00,2013-08-15 08:00,2013-08-15 08:00,,PT_Normal,,,,,wrhL09SzGUSNklwK5I35TQ,,,,Y,0,0,,,2013-11-05 11:09,2013-11-05 11:09,admin,admin,
771,102488,4512,26266,6590,0,N,N,N,CP_Drtn,TT_Task,DT_FixedDrtn,TK_NotStart,JF721.617,Soil Investigation Works,6911,0,0,16,0,20,20,16,0,0,0,,,,2012-06-30 07:00,2012-07-01 13:00,,2012-06-30 07:00,2012-07-01 13:00,2012-06-30 07:00,2012-07-01 13:00,2012-06-30 07:00,2012-07-01 13:00,2012-06-30 07:00,2012-07-01 13:00,,PT_Normal,,,,,haj/5mfWskiz+fwTUiuuZg,6IaxD1vfKUukap+ip91LmA,,,Y,0,0,,,2013-11-05 11:09,2013-11-05 11:09,admin,admin,
772,102489,4512,26267,6590,0,N,N,N,CP_Drtn,TT_Task,DT_FixedDUR2,TK_NotStart,JF721.618,60% Submittal,6917,0,0,8,0,8,8,8,0,0,0,,,,2012-06-30 15:00,2012-07-01 13:00,,2012-06-30 15:00,2012-07-01 13:00,2012-06-30 15:00,2012-07-01 13:00,2012-06-30 15:00,2012-07-01 13:00,2012-06-30 15:00,2012-07-01 13:00,,PT_Normal,,,,,mvqh+MJDhkuA9oAvOusfzQ,ZJGmBxvMMkSBbZ3mHKFC5A,,,Y,0,0,,,2013-11-05 11:09,2013-11-05 11:09,admin,admin,
773,102490,4512,26267,6590,0,N,N,N,CP_Drtn,TT_Task,DT_FixedDUR2,TK_NotStart,JF721.619,60% Comments Incooperation,6917,0,0,56,0,56,56,56,0,0,0,,,,2012-07-01 13:00,2012-07-07 14:00,,2012-07-01 13:00,2012-07-07 14:00,2012-07-01 13:00,2012-07-07 14:00,2012-07-01 13:00,2012-07-07 14:00,2012-07-01 13:00,2012-07-07 14:00,,PT_Normal,,,,,/c1jx031PkGBNUtG/YZ8CQ,luFaTdpbc0K0Z2oi4sLc+A,,,Y,0,0,,,2013-11-05 11:09,2013-11-05 11:09,admin,admin,
774,102491,4512,26267,6590,0,N,N,N,CP_Drtn,TT_Task,DT_FixedDUR2,TK_NotStart,JF721.620,90% Submittal,6917,0,0,8,0,8,8,8,0,0,0,,,,2012-07-07 14:00,2012-07-08 12:00,,2012-07-07 14:00,2012-07-08 12:00,2012-07-07 14:00,2012-07-08 12:00,2012-07-07 14:00,2012-07-08 12:00,2012-07-07 14:00,2012-07-08 12:00,,PT_Normal,,,,,SrO4xXXrE0OI773AJyqPEA,kY6azt4BUUW4NLhndZDEmQ,,,Y,0,0,,,2013-11-05 11:09,2013-11-05 11:09,admin,admin,
775,102492,4512,26267,6590,0,N,N,N,CP_Drtn,TT_Task,DT_FixedDUR2,TK_NotStart,JF721.621,90% Comments Incooperation,6917,0,0,56,0,56,56,56,0,0,0,,,,2012-07-08 12:00,2012-07-14 13:00,,2012-07-08 12:00,2012-07-14 13:00,2012-07-08 12:00,2012-07-14 13:00,2012-07-08 12:00,2012-07-14 13:00,2012-07-08 12:00,2012-07-14 13:00,,PT_Normal,,,,,r+0cLNCqjEGUAOUNzMGp7w,5s/kh1Wp80aWKANGvg8KhQ,,,Y,0,0,,,2013-11-05 11:09,2013-11-05 11:09,admin,admin,
776,102493,4512,26267,6590,0,N,N,N,CP_Drtn,TT_Task,DT_FixedDUR2,TK_NotStart,JF721.622,IFC,6917,0,0,32,0,24,24,32,0,0,0,,,,2012-07-14 13:00,2012-07-17 15:00,,2012-07-14 13:00,2012-07-17 15:00,2012-07-14 13:00,2012-07-17 15:00,2012-07-14 13:00,2012-07-17 15:00,2012-07-14 13:00,2012-07-17 15:00,,PT_Normal,,,,,+vTdmwI5C0S6XrCO3DeHQw,FOCUI2aacEW/S3vj8rFDBw,,,Y,0,0,,,2013-11-05 11:09,2013-11-05 11:09,admin,admin,
777,102494,4512,26268,6590,0,N,N,N,CP_Drtn,TT_Task,DT_FixedDUR2,TK_NotStart,JF721.623,60% Submittal (Tank & Foundation Drawings),6917,0,0,8,0,24,24,8,0,0,0,,,,2012-07-17 15:00,2012-07-18 13:00,,2012-07-17 15:00,2012-07-18 13:00,2012-07-17 15:00,2012-07-18 13:00,2012-07-17 15:00,2012-07-18 13:00,2012-07-17 15:00,2012-07-18 13:00,,PT_Normal,,,,,MGMJGVDqlkKQDwyll27i1Q,SEkKM47C20OJhtxGVb6ytA,,,Y,0,0,,,2013-11-05 11:09,2013-11-05 11:09,admin,admin,
778,102495,4512,26268,6590,0,N,N,N,CP_Drtn,TT_Task,DT_FixedDUR2,TK_NotStart,JF721.624,60% Comments Incooperation (Tanks & Foundation Drawings),6917,0,0,40,0,120,120,40,0,0,0,,,,2012-07-18 13:00,2012-07-23 08:00,,2012-07-18 13:00,2012-07-23 08:00,2012-07-18 13:00,2012-07-23 08:00,2012-07-18 13:00,2012-07-23 08:00,2012-07-18 13:00,2012-07-23 08:00,,PT_Normal,,,,,fFNknQDaWUSPQDwlNKJw6Q,S6QhKv1Cc0OzhDst5GlzeQ,,,Y,0,0,,,2013-11-05 11:09,2013-11-05 11:09,admin,admin,
779,102496,4512,26268,6590,0,N,N,N,CP_Drtn,TT_Task,DT_FixedDUR2,TK_NotStart,JF721.625,90% Submittal (Tanks & Foundation Drawings),6912,0,0,8,0,24,24,8,0,0,0,,,,2012-07-23 08:00,2012-07-23 16:00,,2012-07-23 08:00,2012-07-23 16:00,2012-07-23 08:00,2012-07-23 16:00,2012-07-23 08:00,2012-07-23 16:00,2012-07-23 08:00,2012-07-23 16:00,,PT_Normal,,,,,EJxlA9QodkSI2rFaDyvApg,ETf93JjsZkSGj1NhScJUog,,,Y,0,0,,,2013-11-05 11:09,2013-11-05 11:09,admin,admin,
780,102497,4512,26268,6590,0,N,N,N,CP_Drtn,TT_Task,DT_FixedDUR2,TK_NotStart,JF721.626,90% Comments Incooperation (Tanks & Foundation Drawings),6912,0,0,16,0,48,48,16,0,0,0,,,,2012-07-23 16:00,2012-07-25 12:00,,2012-07-23 16:00,2012-07-25 12:00,2012-07-23 16:00,2012-07-25 12:00,2012-07-23 16:00,2012-07-25 12:00,2012-07-23 16:00,2012-07-25 12:00,,PT_Normal,,,,,iq7o2ZsXwUuufFpgWzTXlg,aylgMEThRUaGRSx4ItryOg,,,Y,0,0,,,2013-11-05 11:09,2013-11-05 11:09,admin,admin,
781,102498,4512,26268,6590,0,N,N,N,CP_Drtn,TT_Task,DT_FixedDUR2,TK_NotStart,JF721.627,IFC,6913,0,0,8,0,24,24,8,0,0,0,,,,2012-07-25 12:00,2012-07-26 10:00,,2012-07-25 12:00,2012-07-26 10:00,2012-07-25 12:00,2012-07-26 10:00,2012-07-25 12:00,2012-07-26 10:00,2012-07-25 12:00,2012-07-26 10:00,,PT_Normal,,,,,gahKS7VBgkebziD3bV/TKQ,z30+4i5xR0W2ej6zMvnlJQ,,,Y,0,0,,,2013-11-05 11:09,2013-11-05 11:09,admin,admin,
782,102499,4512,26269,6590,0,N,N,N,CP_Drtn,TT_FinMile,DT_FixedDrtn,TK_NotStart,5.1,Complete survey and Geotechnical Investigation for Ad-Duaihi Storage Facility.,,0,0,0,0,0,0,0,0,0,0,,,,2012-07-01 13:00,2012-07-01 13:00,,2012-07-01 13:00,2012-07-01 13:00,2012-07-01 13:00,2012-07-01 13:00,2012-07-01 13:00,2012-07-01 13:00,2012-07-01 13:00,2012-07-01 13:00,,PT_Normal,,,,,xMjS7nD+cUeRePqAXUKxAw,,,,Y,0,0,,,2013-11-05 11:09,2013-11-05 11:09,admin,admin,
783,102500,4512,26270,6590,0,N,N,N,CP_Drtn,TT_FinMile,DT_FixedDrtn,TK_NotStart,JF721.5.2,Complete Engineering design and Calculations,,0,0,0,0,0,0,0,0,0,0,,,,2012-07-17 15:00,2012-07-17 15:00,,2012-07-17 15:00,2012-07-17 15:00,2012-07-17 15:00,2012-07-17 15:00,2012-07-17 15:00,2012-07-17 15:00,2012-07-17 15:00,2012-07-17 15:00,,PT_Normal,,,,,KAcHlNY0akObCYYgp7E3yQ,,,,Y,0,0,,,2013-11-05 11:09,2013-11-05 11:09,admin,admin,
784,102501,4512,26271,6590,0,N,N,N,CP_Drtn,TT_FinMile,DT_FixedDrtn,TK_NotStart,5.3,Complete Fabrication and GA Drawing with Bill of Quantities,,0,0,0,0,0,0,0,0,0,0,,,,2012-07-26 10:00,2012-07-26 10:00,,2012-07-26 10:00,2012-07-26 10:00,2012-07-26 10:00,2012-07-26 10:00,2012-07-26 10:00,2012-07-26 10:00,2012-07-26 10:00,2012-07-26 10:00,,PT_Normal,,,,,YsgFbtGt+U2algaDq2BtmQ,,,,Y,0,0,,,2013-11-05 11:09,2013-11-05 11:09,admin,admin,
785,102502,4512,26273,6590,0,N,N,N,CP_Drtn,TT_Task,DT_FixedDUR2,TK_NotStart,JF721.628,PO Issued,,0,0,48,0,0,0,48,0,0,0,,,,2012-07-26 10:00,2012-07-31 13:00,,2012-07-26 10:00,2012-07-31 13:00,2012-07-26 10:00,2012-07-31 13:00,2012-07-26 10:00,2012-07-31 13:00,2012-07-26 10:00,2012-07-31 13:00,,PT_Normal,,,,,/4rpj78elUSnuDXa9TKnkw,6gAtGkktfk+fdG3zu24urg,,,Y,0,0,,,2013-11-05 11:09,2013-11-05 11:09,admin,admin,
786,102503,4512,26273,6590,0,N,N,N,CP_Drtn,TT_Task,DT_FixedDUR2,TK_NotStart,JF721.629,Ma'aden Site Delievery,,0,0,408,0,0,0,408,0,0,0,,,,2012-07-31 13:00,2012-09-16 16:00,,2012-07-31 13:00,2012-09-16 16:00,2012-07-31 13:00,2012-09-16 16:00,2012-07-31 13:00,2012-09-16 16:00,2012-07-31 13:00,2012-09-16 16:00,,PT_Normal,,,,,f17zXUmlyUKg8SxqXk2Wow,fYoh6gmQTkSvAAqfpQuE1g,,,Y,0,0,,,2013-11-05 11:09,2013-11-05 11:09,admin,admin,
787,102504,4512,26274,6590,0,N,N,N,CP_Drtn,TT_Task,DT_FixedDUR2,TK_NotStart,JF721.630,Approval for Vendor Drawings & SPecifications,,560,0,32,0,0,0,32,0,0,0,,,,2012-09-26 09:00,2012-09-29 16:00,,2012-07-24 14:00,2012-07-28 11:00,2012-07-24 14:00,2012-07-28 11:00,2012-07-24 14:00,2012-07-28 11:00,2012-09-26 09:00,2012-09-29 16:00,,PT_Normal,,,,,HcWCTHzpnUSTJKCSZxC0pg,ZiIWLFbsfEKPgdJ5amS+JQ,,,N,0,0,,,2013-11-05 11:09,2013-11-05 11:09,admin,admin,
788,102505,4512,26274,6590,0,N,N,N,CP_Drtn,TT_Task,DT_FixedDUR2,TK_NotStart,JF721.631,PO Issued,,991.983333,0,208,0,0,0,208,0,0,0,,,,2012-11-17 07:59,2012-12-09 10:59,,2012-07-28 11:00,2012-08-22 14:00,2012-07-28 11:00,2012-08-22 14:00,2012-07-28 11:00,2012-08-22 14:00,2012-11-17 07:59,2012-12-09 10:59,,PT_Normal,,,,,CJorLI9OVUiHPf6EnB3Ucg,B5p1U75juUK0y+yr/Iox2w,,,N,0,0,,,2013-11-05 11:09,2013-11-05 11:09,admin,admin,
789,102506,4512,26274,6590,0,N,N,N,CP_Drtn,TT_Task,DT_FixedDUR2,TK_NotStart,JF721.632,CP System Delievered to Ma'aden Site & Installed,6928,0,0,128,0,2340,2340,128,1040,0,1040,,,,2013-06-23 15:00,2013-07-07 13:00,,2013-06-23 15:00,2013-07-07 13:00,2013-06-23 15:00,2013-07-07 13:00,2013-06-23 15:00,2013-07-07 13:00,2013-06-23 15:00,2013-07-07 13:00,,PT_Normal,,,,,7812shFgy0i8/QfqxMrHNA,9D1G6BEB3EOqJytX9JzBGg,,,Y,0,0,,,2013-11-05 11:09,2013-11-05 11:09,admin,admin,
790,102507,4512,26274,6590,0,N,N,N,CP_Drtn,TT_Task,DT_FixedDUR2,TK_NotStart,JF721.633,Ma'aden CP Inspection,6966,0,0,24,0,180,180,24,120,0,120,,,,2013-07-07 13:00,2013-07-09 17:00,,2013-07-07 13:00,2013-07-09 17:00,2013-07-07 13:00,2013-07-09 17:00,2013-07-07 13:00,2013-07-09 17:00,2013-07-07 13:00,2013-07-09 17:00,,PT_Normal,,,,,Vu+tPGLCCUuRzyuMl86GTA,2N2ypLeCzEi1l6+GF/UAFg,,,Y,0,0,,,2013-11-05 11:09,2013-11-05 11:09,admin,admin,
791,102508,4512,26275,6590,0,N,N,N,CP_Drtn,TT_Task,DT_FixedDUR2,TK_NotStart,JF721.634,PO Issued,,512,0,16,0,0,0,16,0,0,0,,,,2012-11-12 13:00,2012-11-14 09:00,,2012-09-16 16:00,2012-09-18 12:00,2012-09-16 16:00,2012-09-18 12:00,2012-09-16 16:00,2012-09-18 12:00,2012-11-12 13:00,2012-11-14 09:00,,PT_Normal,,,,,9Nw5rRqalUCzwrNYpAfPOw,Rv2K34b2IEq081gsxfrsSg,,,N,0,0,,,2013-11-05 11:09,2013-11-05 11:09,admin,admin,
792,102509,4512,26275,6590,0,N,N,N,CP_Drtn,TT_Task,DT_FixedDUR2,TK_NotStart,JF721.635,Ma'aden Site Delievery,,512,0,56,0,0,0,56,0,0,0,,,,2012-11-14 09:00,2012-11-20 10:00,,2012-09-18 12:00,2012-09-24 13:00,2012-09-18 12:00,2012-09-24 13:00,2012-09-18 12:00,2012-09-24 13:00,2012-11-14 09:00,2012-11-20 10:00,,PT_Normal,,,,,GOXxw4xRMUGOvkKk1OWdGA,kdLYCIBwK0OhltjwMPTYBg,,,N,0,0,,,2013-11-05 11:09,2013-11-05 11:09,admin,admin,
793,102510,4512,26276,6590,0,N,N,N,CP_Drtn,TT_Task,DT_FixedDUR2,TK_NotStart,JF721.636,Approval For Vendor Drawings & Specifications,,560,0,32,0,0,0,32,0,0,0,,,,2012-09-26 09:00,2012-09-29 16:00,,2012-07-24 14:00,2012-07-28 11:00,2012-07-24 14:00,2012-07-28 11:00,2012-07-24 14:00,2012-07-28 11:00,2012-09-26 09:00,2012-09-29 16:00,,PT_Normal,,,,,gbHBQYvSqUmaTmS7RSdM1Q,J42k1FIzNESsEBuBKJBpCQ,,,N,0,0,,,2013-11-05 11:09,2013-11-05 11:09,admin,admin,
794,102511,4512,26276,6590,0,N,N,N,CP_Drtn,TT_Task,DT_FixedDUR2,TK_NotStart,JF721.637,P.O Issued,,1167.983333,176,32,0,0,0,32,0,0,0,,,,2012-12-05 13:59,2012-12-09 10:59,,2012-07-28 11:00,2012-07-31 13:00,2012-07-28 11:00,2012-07-31 13:00,2012-07-28 11:00,2012-07-31 13:00,2012-12-05 13:59,2012-12-09 10:59,,PT_Normal,,,,,N204EZlpjESj+rQzLZIrPA,ytI5jl6k50eoEYxgXSQwaw,,,N,0,0,,,2013-11-05 11:09,2013-11-05 11:09,admin,admin,
795,102512,4512,26277,6590,0,N,N,N,CP_Drtn,TT_Task,DT_FixedDUR2,TK_NotStart,JF721.638,Approval for vendor Drawings & Specifcations,,560,0,24,0,0,0,24,0,0,0,,,,2012-09-26 09:00,2012-09-29 08:00,,2012-07-24 14:00,2012-07-27 10:30,2012-07-24 14:00,2012-07-27 10:30,2012-07-24 14:00,2012-07-27 10:30,2012-09-26 09:00,2012-09-29 08:00,,PT_Normal,,,,,9mZxEDDQhUuZPlrZw73UYA,vGZQSv9mn0SU4DnHw62fUQ,,,N,0,0,,,2013-11-05 11:09,2013-11-05 11:09,admin,admin,
796,102513,4512,26277,6590,0,N,N,N,CP_Drtn,TT_Task,DT_FixedDUR2,TK_NotStart,JF721.639,P.O Issued,,1151.983333,160,56,0,0,0,56,0,0,0,,,,2012-12-03 09:59,2012-12-09 10:59,,2012-07-27 10:30,2012-08-02 09:00,2012-07-27 10:30,2012-08-02 09:00,2012-07-27 10:30,2012-08-02 09:00,2012-12-03 09:59,2012-12-09 10:59,,PT_Normal,,,,,vROAo1k7XEiG3zJOmC+awg,XkxIx92hF0+v0meYZPh7lA,,,N,0,0,,,2013-11-05 11:09,2013-11-05 11:09,admin,admin,
797,102514,4512,26277,6590,0,N,N,N,CP_Drtn,TT_Task,DT_FixedDUR2,TK_NotStart,JF721.640,Instrumentation Delievered to Ma'aden & Installed,6951,0,0,200,0,1170,1170,200,520,0,520,,,,2013-07-10 07:00,2013-07-31 12:00,,2013-07-10 07:00,2013-07-31 12:00,2013-07-10 07:00,2013-07-31 12:00,2013-07-10 07:00,2013-07-31 12:00,2013-07-10 07:00,2013-07-31 12:00,,PT_Normal,,,,,EXBJE7RefECo3vQNW0tumw,EJPeriTEe0CDFDev9u4cMg,,,Y,0,0,,,2013-11-05 11:09,2013-11-05 11:09,admin,admin,
798,102515,4512,26277,6590,0,N,N,N,CP_Drtn,TT_Task,DT_FixedDUR2,TK_NotStart,JF721.641,Ma'aden Instrumentation Inspection,6951,0,0,40,0,80,80,40,40,0,40,,,,2013-07-31 12:00,2013-08-04 17:00,,2013-07-31 12:00,2013-08-04 17:00,2013-07-31 12:00,2013-08-04 17:00,2013-07-31 12:00,2013-08-04 17:00,2013-07-31 12:00,2013-08-04 17:00,,PT_Normal,,,,,qV8V13Jdckm1NdzTKndFAw,57AgxCshQUCvtq7dzOYAKw,,,Y,0,0,,,2013-11-05 11:09,2013-11-05 11:09,admin,admin,
799,102516,4512,26278,6590,0,N,N,N,CP_Drtn,TT_Task,DT_FixedDUR2,TK_NotStart,JF721.642,Approve Vendor Drawings & Specifcations,,376,0,16,0,0,0,16,0,0,0,,,,2012-08-30 11:00,2012-09-01 12:00,,2012-07-17 15:00,2012-07-19 11:00,2012-07-17 15:00,2012-07-19 11:00,2012-07-17 15:00,2012-07-19 11:00,2012-08-30 11:00,2012-09-01 12:00,,PT_Normal,,,,,Q3o0BYEuQ0aV5du6iQ+dXA,ukGWBNqu2EOxSGUnQjZVRg,,,N,0,0,,,2013-11-05 11:09,2013-11-05 11:09,admin,admin,
800,102517,4512,26278,6590,0,N,N,N,CP_Drtn,TT_Task,DT_FixedDUR2,TK_NotStart,JF721.643,P.O Issued,,376,0,16,0,0,0,16,0,0,0,,,,2012-09-01 12:00,2012-09-03 08:00,,2012-07-19 11:00,2012-07-21 12:00,2012-07-19 11:00,2012-07-21 12:00,2012-07-19 11:00,2012-07-21 12:00,2012-09-01 12:00,2012-09-03 08:00,,PT_Normal,,,,,taT/XOeZMU+n+iykVhhd3g,NxHr8FPlykizwv+fFkhB7w,,,N,0,0,,,2013-11-05 11:09,2013-11-05 11:09,admin,admin,
801,102518,4512,26279,6590,0,N,N,N,CP_Drtn,TT_Task,DT_FixedDUR2,TK_NotStart,JF721.644,Approval for Vendor Drawings & Specifications,,560,0,40,0,0,0,40,0,0,0,,,,2012-09-29 08:00,2012-10-03 08:00,,2012-07-27 10:30,2012-07-31 13:00,2012-07-27 10:30,2012-07-31 13:00,2012-07-27 10:30,2012-07-31 13:00,2012-09-29 08:00,2012-10-03 08:00,,PT_Normal,,,,,ZriTQ2O0FEmRZpSvN4vknA,DUZ4p+Ubw0C3E8pd3xdA7A,,,N,0,0,,,2013-11-05 11:09,2013-11-05 11:09,admin,admin,
802,102519,4512,26279,6590,0,N,N,N,CP_Drtn,TT_Task,DT_FixedDUR2,TK_NotStart,JF721.645,PO  Issued,,1288,0,40,0,0,0,40,0,0,0,,,,2012-12-22 11:00,2012-12-26 11:00,,2012-07-31 13:00,2012-08-05 08:00,2012-07-31 13:00,2012-08-05 08:00,2012-07-31 13:00,2012-08-05 08:00,2012-12-22 11:00,2012-12-26 11:00,,PT_Normal,,,,,mqnBzvHJ9020u8Jlg4AYDQ,1beg9gcBqECwlOKerVFmtQ,,,N,0,0,,,2013-11-05 11:09,2013-11-05 11:09,admin,admin,
803,102520,4512,26280,6590,0,N,N,N,CP_Drtn,TT_Task,DT_FixedDUR2,TK_NotStart,JF721.646,Approval for Vendor Drawings & Specifications,,560,0,40,0,0,0,40,0,0,0,,,,2012-09-29 08:00,2012-10-03 08:00,,2012-07-27 10:30,2012-07-31 13:00,2012-07-27 10:30,2012-07-31 13:00,2012-07-27 10:30,2012-07-31 13:00,2012-09-29 08:00,2012-10-03 08:00,,PT_Normal,,,,,+kDgfSf/lkqvDVC25VLNtA,UF2eTN9GlE2WNlYJGLrq8g,,,N,0,0,,,2013-11-05 11:09,2013-11-05 11:09,admin,admin,
804,102521,4512,26280,6590,0,N,N,N,CP_Drtn,TT_Task,DT_FixedDUR2,TK_NotStart,JF721.647,PO issued,,560,0,40,0,0,0,40,0,0,0,,,,2012-10-03 08:00,2012-10-07 13:00,,2012-07-31 13:00,2012-08-05 08:00,2012-07-31 13:00,2012-08-05 08:00,2012-07-31 13:00,2012-08-05 08:00,2012-10-03 08:00,2012-10-07 13:00,,PT_Normal,,,,,hlMhO4zIz0WUAM6Jhfz6BA,zZbpF6kNYUOp171WTe1QdQ,,,N,0,0,,,2013-11-05 11:09,2013-11-05 11:09,admin,admin,
805,102522,4512,26281,6590,0,N,N,N,CP_Drtn,TT_Task,DT_FixedDUR2,TK_NotStart,JF721.648,Approval For vendor Specifcations,,888,0,56,0,0,0,56,0,0,0,,,,2012-11-08 16:00,2012-11-14 17:00,,2012-07-31 13:00,2012-08-06 14:00,2012-07-31 13:00,2012-08-06 14:00,2012-07-31 13:00,2012-08-06 14:00,2012-11-08 16:00,2012-11-14 17:00,,PT_Normal,,,,,XRsXKKCENUGg8ZXh++zaTA,v37rRuq8J0Cq4aK5WDAbHw,,,N,0,0,,,2013-11-05 11:09,2013-11-05 11:09,admin,admin,
806,102523,4512,26281,6590,0,N,N,N,CP_Drtn,TT_Task,DT_FixedDUR2,TK_NotStart,JF721.649,PO issued,,888,0,24,0,0,0,24,0,0,0,,,,2012-11-15 07:00,2012-11-17 16:00,,2012-08-06 14:00,2012-08-09 08:00,2012-08-06 14:00,2012-08-09 08:00,2012-08-06 14:00,2012-08-09 08:00,2012-11-15 07:00,2012-11-17 16:00,,PT_Normal,,,,,B4MNUE92HEq7PC/Z0hXBXQ,GmCqBin2IEG3efX1c1MDVA,,,N,0,0,,,2013-11-05 11:09,2013-11-05 11:09,admin,admin,
807,102524,4512,26282,6590,0,N,N,N,CP_Drtn,TT_Task,DT_FixedDUR2,TK_NotStart,JF721.650,Plates,,376,0,728.016667,0,0,0,728.016667,0,0,0,,,,2012-09-03 08:00,2012-11-21 16:01,,2012-07-21 12:00,2012-10-10 15:01,2012-07-21 12:00,2012-10-10 15:01,2012-07-21 12:00,2012-10-10 15:01,2012-09-03 08:00,2012-11-21 16:01,,PT_Normal,,,,,RrvbBJVhVUOjYNNkqIVh9Q,7BB6zyUsO0KqmWA7Z4cxoA,,,N,0,0,,,2013-11-05 11:09,2013-11-05 11:09,admin,admin,
808,102525,4512,26282,6590,0,N,N,N,CP_Drtn,TT_Task,DT_FixedDUR2,TK_NotStart,JF721.651,Profile Material,,1288,272,248,0,0,0,248,0,0,0,,,,2012-12-26 11:00,2013-01-22 09:00,,2012-08-05 08:00,2012-09-03 16:00,2012-08-05 08:00,2012-09-03 16:00,2012-08-05 08:00,2012-09-03 16:00,2012-12-26 11:00,2013-01-22 09:00,,PT_Normal,,,,,s7Q797e+YkaQ8lEmWl9V+A,zrw2BoieRkSuVRH/S1w1HQ,,,N,0,0,,,2013-11-05 11:09,2013-11-05 11:09,admin,admin,
809,102526,4512,26282,6590,0,N,N,N,CP_Drtn,TT_Task,DT_FixedDUR2,TK_NotStart,JF721.652,Pipes & Fittings,,560,0,368,0,0,0,368,0,0,0,,,,2012-10-07 13:00,2012-11-17 16:00,,2012-08-05 08:00,2012-09-16 16:00,2012-08-05 08:00,2012-09-16 16:00,2012-08-05 08:00,2012-09-16 16:00,2012-10-07 13:00,2012-11-17 16:00,,PT_Normal,,,,,LFktEEwK/EO+r6r2TWZWYw,N+UUB+TkU0C3/DYVm4RjNQ,,,N,0,0,,,2013-11-05 11:09,2013-11-05 11:09,admin,admin,
810,102527,4512,26283,6590,0,N,N,N,CP_Drtn,TT_Task,DT_FixedDUR2,TK_NotStart,JF721.653,Define Layout,,376,0,32,0,0,0,32,0,0,0,,,,2012-10-28 09:00,2012-10-31 11:00,,2012-09-16 08:00,2012-09-19 10:00,2012-09-16 08:00,2012-09-19 10:00,2012-09-16 08:00,2012-09-19 10:00,2012-10-28 09:00,2012-10-31 11:00,,PT_Normal,,,,,lo0bn1/VLES2IL8NVs228Q,mxw70NktA0aOM+4xlmPsdQ,,,N,0,0,,,2013-11-05 11:09,2013-11-05 11:09,admin,admin,
811,102528,4512,26283,6590,0,N,N,N,CP_Drtn,TT_Task,DT_FixedDUR2,TK_NotStart,JF721.654,Cutting,,376,0,64,0,0,0,64,0,0,0,,,,2012-10-28 09:00,2012-11-04 08:00,,2012-09-16 08:00,2012-09-22 17:00,2012-09-16 08:00,2012-09-22 17:00,2012-09-16 08:00,2012-09-22 17:00,2012-10-28 09:00,2012-11-04 08:00,,PT_Normal,,,,,074PBXfQHUeVveKMT9q7aQ,PX4+TjQmOUK6DJNEL8qR+Q,,,N,0,0,,,2013-11-05 11:09,2013-11-05 11:09,admin,admin,
812,102529,4512,26283,6590,0,N,N,N,CP_Drtn,TT_Task,DT_FixedDUR2,TK_NotStart,JF721.655,Fit-up,,376,0,56,0,0,0,56,0,0,0,,,,2012-11-01 09:00,2012-11-07 10:00,,2012-09-20 08:00,2012-09-26 09:00,2012-09-20 08:00,2012-09-26 09:00,2012-09-20 08:00,2012-09-26 09:00,2012-11-01 09:00,2012-11-07 10:00,,PT_Normal,,,,,HXOb4WtAgUKuEoh4mAYm/g,ls7VwBmWQkm8Jgdan0INHA,,,N,0,0,,,2013-11-05 11:09,2013-11-05 11:09,admin,admin,
813,102530,4512,26283,6590,0,N,N,N,CP_Drtn,TT_Task,DT_FixedDUR2,TK_NotStart,JF721.656,Welding,,376,0,64,0,0,0,64,0,0,0,,,,2012-11-03 10:00,2012-11-10 09:00,,2012-09-22 09:00,2012-09-29 08:00,2012-09-22 09:00,2012-09-29 08:00,2012-09-22 09:00,2012-09-29 08:00,2012-11-03 10:00,2012-11-10 09:00,,PT_Normal,,,,,OLmI6+0NjkKfLThpdykMdg,bL4UTis9HE+PTaLTceqgxg,,,N,0,0,,,2013-11-05 11:09,2013-11-05 11:09,admin,admin,
814,102531,4512,26283,6590,0,N,N,N,CP_Drtn,TT_Task,DT_FixedDUR2,TK_NotStart,JF721.657,Shop Blasting/Painting,,376,0,56,0,0,0,56,0,0,0,,,,2012-11-06 12:00,2012-11-12 13:00,,2012-09-25 11:00,2012-10-01 12:00,2012-09-25 11:00,2012-10-01 12:00,2012-09-25 11:00,2012-10-01 12:00,2012-11-06 12:00,2012-11-12 13:00,,PT_Normal,,,,,v5ITLL6asE6Z90AUEZlghQ,W0UKf1OH/066DYQHOyiElQ,,,N,0,0,,,2013-11-05 11:09,2013-11-05 11:09,admin,admin,
815,102532,4512,26283,6590,0,N,N,N,CP_Drtn,TT_Task,DT_FixedDUR2,TK_NotStart,JF721.658,Inspect & Accept for use,,376,0,16,0,0,0,16,0,0,0,,,,2012-11-12 13:00,2012-11-14 09:00,,2012-10-01 12:00,2012-10-03 08:00,2012-10-01 12:00,2012-10-03 08:00,2012-10-01 12:00,2012-10-03 08:00,2012-11-12 13:00,2012-11-14 09:00,,PT_Normal,,,,,iucDrS1QNEqT2PuNPv4c0A,DRsy+DgRvU6lBO9eL7SORg,,,N,0,0,,,2013-11-05 11:09,2013-11-05 11:09,admin,admin,
816,102533,4512,26284,6590,0,N,N,N,CP_Drtn,TT_Task,DT_FixedDUR2,TK_NotStart,JF721.659,Define Layout,,688,0,56,0,0,0,56,0,0,0,,,,2012-12-04 08:00,2012-12-10 09:00,,2012-09-19 10:00,2012-09-25 11:00,2012-09-19 10:00,2012-09-25 11:00,2012-09-19 10:00,2012-09-25 11:00,2012-12-04 08:00,2012-12-10 09:00,,PT_Normal,,,,,QfzS7IlcwEqUopjoWahhmA,FUQ/UdV29EWyR2+FSajmnA,,,N,0,0,,,2013-11-05 11:09,2013-11-05 11:09,admin,admin,
817,102534,4512,26284,6590,0,N,N,N,CP_Drtn,TT_Task,DT_FixedDUR2,TK_NotStart,JF721.660,Cutting,,688,0,128,0,0,0,128,0,0,0,,,,2012-12-04 08:00,2012-12-17 16:00,,2012-09-19 10:00,2012-10-03 08:00,2012-09-19 10:00,2012-10-03 08:00,2012-09-19 10:00,2012-10-03 08:00,2012-12-04 08:00,2012-12-17 16:00,,PT_Normal,,,,,ZH6GtER8gkSXW6iHGLIYLg,UgF2iCfBq0K6PVj2CGY6/w,,,N,0,0,,,2013-11-05 11:09,2013-11-05 11:09,admin,admin,
818,102535,4512,26284,6590,0,N,N,N,CP_Drtn,TT_Task,DT_FixedDUR2,TK_NotStart,JF721.661,Bevelling/Rolling,,688,0,128,0,0,0,128,0,0,0,,,,2012-12-07 12:30,2012-12-21 10:30,,2012-09-23 07:00,2012-10-06 15:00,2012-09-23 07:00,2012-10-06 15:00,2012-09-23 07:00,2012-10-06 15:00,2012-12-07 12:30,2012-12-21 10:30,,PT_Normal,,,,,THYcHEuw0EWzZ5DSVLk1ig,S02mIPEVYkK8oMO9W4AWkw,,,N,0,0,,,2013-11-05 11:09,2013-11-05 11:09,admin,admin,
819,102536,4512,26284,6590,0,N,N,N,CP_Drtn,TT_Task,DT_FixedDUR2,TK_NotStart,JF721.662,Shop Blasting/Painting,,688,0,168,0,0,0,168,0,0,0,,,,2012-12-11 15:00,2012-12-30 08:00,,2012-09-27 07:00,2012-10-15 10:00,2012-09-27 07:00,2012-10-15 10:00,2012-09-27 07:00,2012-10-15 10:00,2012-12-11 15:00,2012-12-30 08:00,,PT_Normal,,,,,xQ8MxewZJUSS8RwawKTW5g,R1h4/VBmLkiBW8eSOm59Pg,,,N,0,0,,,2013-11-05 11:09,2013-11-05 11:09,admin,admin,
820,102537,4512,26284,6590,0,N,N,N,CP_Drtn,TT_Task,DT_FixedDUR2,TK_NotStart,JF721.663,Inspect & Accept for use,,688,0,24,0,0,0,24,0,0,0,,,,2012-12-30 08:00,2013-01-01 12:00,,2012-10-15 10:00,2012-10-17 14:00,2012-10-15 10:00,2012-10-17 14:00,2012-10-15 10:00,2012-10-17 14:00,2012-12-30 08:00,2013-01-01 12:00,,PT_Normal,,,,,tB1vAdjXX0GSyxAvubyLcg,YBVP68BJjUmfODwENE+svQ,,,N,0,0,,,2013-11-05 11:09,2013-11-05 11:09,admin,admin,
821,102538,4512,26285,6590,0,N,N,N,CP_Drtn,TT_Task,DT_FixedDUR2,TK_NotStart,JF721.664,Define layout,,1016,0,24,0,0,0,24,0,0,0,,,,2013-01-22 09:00,2013-01-24 13:00,,2012-10-03 08:00,2012-10-05 14:30,2012-10-03 08:00,2012-10-05 14:30,2012-10-03 08:00,2012-10-05 14:30,2013-01-22 09:00,2013-01-24 13:00,,PT_Normal,,,,,lWrysQh6OUWf2n6UMuzkjQ,w3G7PXi+E06GeLvXYgrelA,,,N,0,0,,,2013-11-05 11:09,2013-11-05 11:09,admin,admin,
822,102539,4512,26285,6590,0,N,N,N,CP_Drtn,TT_Task,DT_FixedDUR2,TK_NotStart,JF721.665,Cutting,,1016,0,40,0,0,0,40,0,0,0,,,,2013-01-24 13:00,2013-01-28 10:00,,2012-10-06 07:00,2012-10-09 17:00,2012-10-06 07:00,2012-10-09 17:00,2012-10-06 07:00,2012-10-09 17:00,2013-01-24 13:00,2013-01-28 10:00,,PT_Normal,,,,,JC5bvY9uO0yZusSwOZrXjg,zrSzfjuKgEi/4kwAHcaT8g,,,N,0,0,,,2013-11-05 11:09,2013-11-05 11:09,admin,admin,
823,102540,4512,26285,6590,0,N,N,N,CP_Drtn,TT_Task,DT_FixedDUR2,TK_NotStart,JF721.666,Bevelling,,1016,0,48,0,0,0,48,0,0,0,,,,2013-01-26 14:00,2013-01-30 14:00,,2012-10-07 13:00,2012-10-12 13:30,2012-10-07 13:00,2012-10-12 13:30,2012-10-07 13:00,2012-10-12 13:30,2013-01-26 14:00,2013-01-30 14:00,,PT_Normal,,,,,0iKGEDZqF0iodYd3y/k4gw,7yxvUkoSZEyS6UxEX5iF6A,,,N,0,0,,,2013-11-05 11:09,2013-11-05 11:09,admin,admin,
824,102541,4512,26285,6590,0,N,N,N,CP_Drtn,TT_Task,DT_FixedDUR2,TK_NotStart,JF721.667,Fit-up/Welding,,1016,0,104,0,0,0,104,0,0,0,,,,2013-01-28 10:00,2013-02-08 11:30,,2012-10-10 07:00,2012-10-21 11:00,2012-10-10 07:00,2012-10-21 11:00,2012-10-10 07:00,2012-10-21 11:00,2013-01-28 10:00,2013-02-08 11:30,,PT_Normal,,,,,QVJEYUNORUyu8WHt19WnQQ,LwL11e5CV02X51p0WSpDoQ,,,N,0,0,,,2013-11-05 11:09,2013-11-05 11:09,admin,admin,
825,102542,4512,26285,6590,0,N,N,N,CP_Drtn,TT_Task,DT_FixedDUR2,TK_NotStart,JF721.668,Blasting/Painting,,1016,0,72,0,0,0,72,0,0,0,,,,2013-02-03 11:00,2013-02-11 08:00,,2012-10-16 08:00,2012-10-23 15:00,2012-10-16 08:00,2012-10-23 15:00,2012-10-16 08:00,2012-10-23 15:00,2013-02-03 11:00,2013-02-11 08:00,,PT_Normal,,,,,FoW6mEVbEECyyy8c2wm73Q,Wf3sumOy5UW0AmVfp4d1Og,,,N,0,0,,,2013-11-05 11:09,2013-11-05 11:09,admin,admin,
826,102543,4512,26285,6590,0,N,N,N,CP_Drtn,TT_Task,DT_FixedDUR2,TK_NotStart,JF721.669,Inspect & Accept for use,,1016,0,16,0,0,0,16,0,0,0,,,,2013-02-11 08:00,2013-02-12 14:00,,2012-10-23 15:00,2012-10-25 11:00,2012-10-23 15:00,2012-10-25 11:00,2012-10-23 15:00,2012-10-25 11:00,2013-02-11 08:00,2013-02-12 14:00,,PT_Normal,,,,,FleEyyyI9UW2KrAuVKN63Q,MnJyf739TUaF/k71RebwFA,,,N,0,0,,,2013-11-05 11:09,2013-11-05 11:09,admin,admin,
827,102544,4512,26286,6590,0,N,N,N,CP_Drtn,TT_Task,DT_FixedDUR2,TK_NotStart,JF721.670,Define Layout,,1192,0,32,0,0,0,32,0,0,0,,,,2013-02-27 10:00,2013-03-02 17:00,,2012-10-21 11:00,2012-10-24 13:00,2012-10-21 11:00,2012-10-24 13:00,2012-10-21 11:00,2012-10-24 13:00,2013-02-27 10:00,2013-03-02 17:00,,PT_Normal,,,,,usZ6/+dKi0yJ5ms/EMbTyg,xu+EFonkYkyAAWCadAF29Q,,,N,0,0,,,2013-11-05 11:09,2013-11-05 11:09,admin,admin,
828,102545,4512,26286,6590,0,N,N,N,CP_Drtn,TT_Task,DT_FixedDUR2,TK_NotStart,JF721.671,Cutting,,1192,0,48,0,0,0,48,0,0,0,,,,2013-03-03 07:00,2013-03-07 15:00,,2012-10-24 13:00,2012-10-31 11:00,2012-10-24 13:00,2012-10-31 11:00,2012-10-24 13:00,2012-10-31 11:00,2013-03-03 07:00,2013-03-07 15:00,,PT_Normal,,,,,rlnPWneKoEqNek6BETr1Cw,V/kEsMKOQ0GqI3SVeH8lXw,,,N,0,0,,,2013-11-05 11:09,2013-11-05 11:09,admin,admin,
829,102546,4512,26286,6590,0,N,N,N,CP_Drtn,TT_Task,DT_FixedDUR2,TK_NotStart,JF721.672,Fit-Up,,1192,0,72,0,0,0,72,0,0,0,,,,2013-03-07 15:00,2013-03-15 14:30,,2012-10-31 11:00,2012-11-08 08:00,2012-10-31 11:00,2012-11-08 08:00,2012-10-31 11:00,2012-11-08 08:00,2013-03-07 15:00,2013-03-15 14:30,,PT_Normal,,,,,AP5WGnL9kkKKjm2nsRiw6A,RL5q5N6my06hnuJgayQcfQ,,,N,0,0,,,2013-11-05 11:09,2013-11-05 11:09,admin,admin,
830,102547,4512,26286,6590,0,N,N,N,CP_Drtn,TT_Task,DT_FixedDUR2,TK_NotStart,JF721.673,Welding,,1192,0,88,0,0,0,88,0,0,0,,,,2013-03-20 07:00,2013-03-29 12:30,,2012-11-12 13:00,2012-11-21 16:00,2012-11-12 13:00,2012-11-21 16:00,2012-11-12 13:00,2012-11-21 16:00,2013-03-20 07:00,2013-03-29 12:30,,PT_Normal,,,,,NBSS5O0DLEuCVz6y0ehg7w,uTbSKvVRQke8bnkZogQDAA,,,N,0,0,,,2013-11-05 11:09,2013-11-05 11:09,admin,admin,
831,102548,4512,26286,6590,0,N,N,N,CP_Drtn,TT_Task,DT_FixedDUR2,TK_NotStart,JF721.674,Blasting/Painting,,1192,0,88,0,0,0,88,0,0,0,,,,2013-03-25 10:00,2013-04-03 13:00,,2012-11-17 16:00,2012-11-27 09:00,2012-11-17 16:00,2012-11-27 09:00,2012-11-17 16:00,2012-11-27 09:00,2013-03-25 10:00,2013-04-03 13:00,,PT_Normal,,,,,YlPl6dEu4UqiOdLnzg2KqQ,K+t8YLeZFkKAmq4f/af1dw,,,N,0,0,,,2013-11-05 11:09,2013-11-05 11:09,admin,admin,
832,102549,4512,26286,6590,0,N,N,N,CP_Drtn,TT_Task,DT_FixedDUR2,TK_NotStart,JF721.675,Inspect & Accept for use,,1192,0,24,0,0,0,24,0,0,0,,,,2013-04-03 13:00,2013-04-06 12:00,,2012-11-27 09:00,2012-11-29 13:00,2012-11-27 09:00,2012-11-29 13:00,2012-11-27 09:00,2012-11-29 13:00,2013-04-03 13:00,2013-04-06 12:00,,PT_Normal,,,,,agAe86tYQkyrr5iEbCsv8w,E+VTwbc91Uqtneta3hBipQ,,,N,0,0,,,2013-11-05 11:09,2013-11-05 11:09,admin,admin,
833,102550,4512,26287,6590,0,N,N,N,CP_Drtn,TT_Task,DT_FixedDUR2,TK_NotStart,JF721.676,"Annular,Bottom & Sump",,376,376,56,0,0,0,56,0,0,0,,,,2012-11-14 09:00,2012-11-20 10:00,,2012-10-03 08:00,2012-10-09 09:00,2012-10-03 08:00,2012-10-09 09:00,2012-10-03 08:00,2012-10-09 09:00,2012-11-14 09:00,2012-11-20 10:00,,PT_Normal,,,,,hni2CEfHGEqMVDVF6MDZMw,drtGpP++2EOYt8XPCSMUOg,,,N,0,0,,,2013-11-05 11:09,2013-11-05 11:09,admin,admin,
834,102551,4512,26287,6590,0,N,N,N,CP_Drtn,TT_Task,DT_FixedDUR2,TK_NotStart,JF721.677,"Shell Courses #1,#2,#3,#4",,688,688,104,0,0,0,104,0,0,0,,,,2013-01-01 12:00,2013-01-12 16:00,,2012-10-17 14:00,2012-10-30 13:00,2012-10-17 14:00,2012-10-30 13:00,2012-10-17 14:00,2012-10-30 13:00,2013-01-01 12:00,2013-01-12 16:00,,PT_Normal,,,,,5ic6BXOmSUCMYPZNLgyKUw,nZE05kWf5UK4rEv9fxk8pw,,,N,0,0,,,2013-11-05 11:09,2013-11-05 11:09,admin,admin,
835,102552,4512,26287,6590,0,N,N,N,CP_Drtn,TT_Task,DT_FixedDUR2,TK_NotStart,JF721.678,Shell Nozzles & Manholes,,1016,1016,40,0,0,0,40,0,0,0,,,,2013-02-12 14:00,2013-02-17 09:00,,2012-10-25 11:00,2012-10-31 11:00,2012-10-25 11:00,2012-10-31 11:00,2012-10-25 11:00,2012-10-31 11:00,2013-02-12 14:00,2013-02-17 09:00,,PT_Normal,,,,,or7th28yFEC0b//9eDdPAQ,fvdwYjkpkkOkv15B5Usf9w,,,N,0,0,,,2013-11-05 11:09,2013-11-05 11:09,admin,admin,
836,102553,4512,26287,6590,0,N,N,N,CP_Drtn,TT_Task,DT_FixedDUR2,TK_NotStart,JF721.679,"Platforms,Stairs & Handrails",,1192,1192,56,0,0,0,56,0,0,0,,,,2013-04-06 12:00,2013-04-12 10:30,,2012-11-29 13:00,2012-12-05 14:00,2012-11-29 13:00,2012-12-05 14:00,2012-11-29 13:00,2012-12-05 14:00,2013-04-06 12:00,2013-04-12 10:30,,PT_Normal,,,,,AuqId3BW20+Mz+iYF3Sekg,sJSlKx11kEuhlj39lJjFlg,,,N,0,0,,,2013-11-05 11:09,2013-11-05 11:09,admin,admin,
837,102554,4512,26287,6590,0,N,N,N,CP_Drtn,TT_Task,DT_FixedDUR2,TK_NotStart,JF721.680,Pipes & Fittings,,560,48,24,0,0,0,24,0,0,0,,,,2012-11-17 16:00,2012-11-20 10:00,,2012-09-16 16:00,2012-09-19 10:00,2012-09-16 16:00,2012-09-19 10:00,2012-09-16 16:00,2012-09-19 10:00,2012-11-17 16:00,2012-11-20 10:00,,PT_Normal,,,,,YR2dJCeFuE69eBekHaq7Cg,fCV9meug2EOcR25AFz3hng,,,N,0,0,,,2013-11-05 11:09,2013-11-05 11:09,admin,admin,
838,102555,4512,26287,6590,0,N,N,N,CP_Drtn,TT_Task,DT_FixedDUR2,TK_NotStart,JF721.681,Aluminum Dome Roof,,991.983333,991.983333,728.016667,0,0,0,728.016667,0,0,0,,,,2012-12-09 10:59,2013-02-24 16:00,,2012-08-22 14:00,2012-11-11 07:01,2012-08-22 14:00,2012-11-11 07:01,2012-08-22 14:00,2012-11-11 07:01,2012-12-09 10:59,2013-02-24 16:00,,PT_Normal,,,,,Cx59IhnSzUaMbq6efde53g,c3H83v8ZcEqoPn8G/L04vQ,,,N,0,0,,,2013-11-05 11:09,2013-11-05 11:09,admin,admin,
839,102556,4512,26287,6590,0,N,N,N,CP_Drtn,TT_Task,DT_FixedDUR2,TK_NotStart,JF721.682,Paint Material,,888,376,24,0,0,0,24,0,0,0,,,,2012-11-17 16:00,2012-11-20 10:00,,2012-08-09 08:00,2012-08-11 17:00,2012-08-09 08:00,2012-08-11 17:00,2012-08-09 08:00,2012-08-11 17:00,2012-11-17 16:00,2012-11-20 10:00,,PT_Normal,,,,,EHMu4S2TEU+SDg8w3ym6EQ,glCpxESIn0KWFaoqZufLkg,,,N,0,0,,,2013-11-05 11:09,2013-11-05 11:09,admin,admin,
840,102557,4512,26288,6590,0,N,N,N,CP_Drtn,TT_FinMile,DT_FixedDrtn,TK_NotStart,5.6,Purchase Order placement for Major Materials,,991.983333,0,0,0,0,0,0,0,0,0,,,,2012-12-09 10:59,2012-12-09 10:59,,2012-08-22 14:00,2012-08-22 14:00,2012-08-22 14:00,2012-08-22 14:00,2012-08-22 14:00,2012-08-22 14:00,2012-12-09 10:59,2012-12-09 10:59,,PT_Normal,,,,,u7D0ZJtFHUGTyZgTdzXEUw,,,,N,0,0,,,2013-11-05 11:09,2013-11-05 11:09,admin,admin,
841,102558,4512,26289,6590,0,N,N,N,CP_Drtn,TT_FinMile,DT_FixedDrtn,TK_NotStart,5.5,"Material Requisition approval for Steel plates, Cathodic Protection, field instruments etc.",,560,0,0,0,0,0,0,0,0,0,,,,2012-09-29 08:00,2012-09-29 08:00,,2012-07-27 10:30,2012-07-27 10:30,2012-07-27 10:30,2012-07-27 10:30,2012-07-27 10:30,2012-07-27 10:30,2012-09-29 08:00,2012-09-29 08:00,,PT_Normal,,,,,gRggkMyRckaiew7ZDiMDiw,,,,N,0,0,,,2013-11-05 11:09,2013-11-05 11:09,admin,admin,
842,102559,4512,26290,6590,0,N,N,N,CP_Drtn,TT_FinMile,DT_FixedDrtn,TK_NotStart,5.11,Complete Installation of Cathodic Protection,,0,0,0,0,0,0,0,0,0,0,,,,2013-07-09 17:00,2013-07-09 17:00,,2013-07-09 17:00,2013-07-09 17:00,2013-07-09 17:00,2013-07-09 17:00,2013-07-09 17:00,2013-07-09 17:00,2013-07-09 17:00,2013-07-09 17:00,,PT_Normal,,,,,VSA3mVk2+Ee9Yl9EYgCh1w,,,,Y,0,0,,,2013-11-05 11:09,2013-11-05 11:09,admin,admin,
843,102560,4512,26291,6590,0,N,N,N,CP_Drtn,TT_FinMile,DT_FixedDrtn,TK_NotStart,5.12,Complete Installation for instruments,,0,0,0,0,0,0,0,0,0,0,,,,2013-08-04 17:00,2013-08-04 17:00,,2013-08-04 17:00,2013-08-04 17:00,2013-08-04 17:00,2013-08-04 17:00,2013-08-04 17:00,2013-08-04 17:00,2013-08-04 17:00,2013-08-04 17:00,,PT_Normal,,,,,kWOKtRoy5kaABEeLEX5K9A,,,,Y,0,0,,,2013-11-05 11:09,2013-11-05 11:09,admin,admin,
844,102561,4512,26292,6590,0,N,N,N,CP_Drtn,TT_FinMile,DT_FixedDrtn,TK_NotStart,5.8,Supply of materials to site,,512,512,0,0,0,0,0,0,0,0,,,,2012-11-20 10:00,2012-11-20 10:00,,2012-09-24 13:00,2012-09-24 13:00,2012-09-24 13:00,2012-09-24 13:00,2012-09-24 13:00,2012-09-24 13:00,2012-11-20 10:00,2012-11-20 10:00,,PT_Normal,,,,,O2F4sZU2Rkm4ps4mxUOgUQ,,,,N,0,0,,,2013-11-05 11:09,2013-11-05 11:09,admin,admin,
