,task_id,proj_id,wbs_id,clndr_id,est_wt,phys_complete_pct,rev_fdbk_flag,lock_plan_flag,auto_compute_act_flag,complete_pct_type,task_type,duration_type,review_type,status_code,task_code,task_name,rsrc_id,total_float_hr_cnt,free_float_hr_cnt,remain_drtn_hr_cnt,act_work_qty,remain_work_qty,target_work_qty,target_drtn_hr_cnt,target_equip_qty,act_equip_qty,remain_equip_qty,cstr_date,act_start_date,act_end_date,late_start_date,late_end_date,expect_end_date,early_start_date,early_end_date,restart_date,reend_date,target_start_date,target_end_date,review_end_date,rem_late_start_date,rem_late_end_date,cstr_type,priority_type,suspend_date,resume_date,float_path,float_path_order,guid,tmpl_guid,cstr_date2,cstr_type2,driving_path_flag,act_this_per_work_qty,act_this_per_equip_qty,external_early_start_date,external_late_end_date,create_date,update_date,create_user,update_user
0,158880,7529,26743,794,1,0,N,N,N,CP_Drtn,TT_Task,DT_FixedDUR2,RV_OK,TK_NotStart,A-15,Excavation,,8,0,80,0,0,0,80,0,0,0,,,,2012-10-07 08:00,2012-10-16 17:00,,2012-10-06 08:00,2012-10-15 17:00,2012-10-06 08:00,2012-10-15 17:00,2012-10-06 08:00,2012-10-15 17:00,,2012-10-07 08:00,2012-10-16 17:00,,PT_Normal,,,,,sPl7Aqi3lUWOdHydMiD6bw,snTY+sdFOUG8WZ9VV1yffQ,,,Y,0,0,,,2012-09-26 11:27,2012-10-03 16:55,admin,admin
1,158881,7529,26743,794,1,0,N,N,N,CP_Drtn,TT_Task,DT_FixedDUR2,RV_OK,TK_NotStart,A-20,Soil replacement,,8,0,80,0,0,0,80,0,0,0,,,,2012-10-17 08:00,2012-10-26 17:00,,2012-10-16 08:00,2012-10-25 17:00,2012-10-16 08:00,2012-10-25 17:00,2012-10-16 08:00,2012-10-25 17:00,,2012-10-17 08:00,2012-10-26 17:00,,PT_Normal,,,,,rBiHJ9AIl0mGe+e3lZmiuA,FsSJ8XLmkEqy3WkHcj2LyA,,,Y,0,0,,,2012-09-26 11:27,2012-10-03 16:55,admin,admin
2,158882,7529,26743,794,1,0,N,N,N,CP_Drtn,TT_Task,DT_FixedDUR2,RV_OK,TK_NotStart,A-25,P.C footings,,8,0,80,0,0,0,80,0,0,0,,,,2012-10-27 08:00,2012-11-05 17:00,,2012-10-26 08:00,2012-11-04 17:00,2012-10-26 08:00,2012-11-04 17:00,2012-10-26 08:00,2012-11-04 17:00,,2012-10-27 08:00,2012-11-05 17:00,,PT_Normal,,,,,x0Yx2bJLxU2cUJ9RlHZzVw,20khFAnU2kOcyi/bvUBj3Q,,,Y,0,0,,,2012-09-26 11:27,2012-10-03 16:55,admin,admin
3,158883,7529,26743,794,1,0,N,N,N,CP_Drtn,TT_Task,DT_FixedDUR2,RV_OK,TK_NotStart,A-31,R.C footings,,8,0,112,0,0,0,112,0,0,0,,,,2012-11-06 08:00,2012-11-19 17:00,,2012-11-05 08:00,2012-11-18 17:00,2012-11-05 08:00,2012-11-18 17:00,2012-11-05 08:00,2012-11-18 17:00,,2012-11-06 08:00,2012-11-19 17:00,,PT_Normal,,,,,Nr1UYZZKYEuuj+UvFPFYbw,e9l78gajhkmwopuGrYPJzQ,,,Y,0,0,,,2012-09-26 11:27,2012-10-03 16:55,admin,admin
4,158884,7529,26743,794,1,0,N,N,N,CP_Drtn,TT_Task,DT_FixedDUR2,RV_OK,TK_NotStart,A-40,R.C columns&walls,,8,0,160,0,0,0,160,0,0,0,,,,2012-11-20 08:00,2012-12-09 17:00,,2012-11-19 08:00,2012-12-08 17:00,2012-11-19 08:00,2012-12-08 17:00,2012-11-19 08:00,2012-12-08 17:00,,2012-11-20 08:00,2012-12-09 17:00,,PT_Normal,,,,,NVujfeSoqE2Mg+eQmhlvZw,/5KJmfW7s02gC6RVUBF8Tw,,,Y,0,0,,,2012-09-26 11:27,2012-10-03 16:55,admin,admin
5,158885,7529,26743,794,1,0,N,N,N,CP_Drtn,TT_Task,DT_FixedDUR2,RV_OK,TK_NotStart,A-48,Bituminous insulation,,8,0,80,0,0,0,80,0,0,0,,,,2012-12-10 08:00,2012-12-19 17:00,,2012-12-09 08:00,2012-12-18 17:00,2012-12-09 08:00,2012-12-18 17:00,2012-12-09 08:00,2012-12-18 17:00,,2012-12-10 08:00,2012-12-19 17:00,,PT_Normal,,,,,/bc2LKxEeECzEyiColegRw,Jr5reIgfj0i1yND3lwzjyA,,,Y,0,0,,,2012-09-26 11:27,2012-10-03 16:55,admin,admin
6,158886,7529,26743,794,1,0,N,N,N,CP_Drtn,TT_Task,DT_FixedDUR2,RV_OK,TK_NotStart,A-53,Masonry under slab on grade,,8,0,160,0,0,0,160,0,0,0,,,,2012-12-20 08:00,2013-01-08 17:00,,2012-12-19 08:00,2013-01-07 17:00,2012-12-19 08:00,2013-01-07 17:00,2012-12-19 08:00,2013-01-07 17:00,,2012-12-20 08:00,2013-01-08 17:00,,PT_Normal,,,,,Dkq+qdD2ZUaL5xq6Fc30uQ,5fOGAmwIvUqiYg/s2K/DAQ,,,Y,0,0,,,2012-09-26 11:27,2012-10-03 16:55,admin,admin
7,158887,7529,26743,794,1,0,N,N,N,CP_Drtn,TT_Task,DT_FixedDUR2,RV_OK,TK_NotStart,A-58,Backfilling around foundation,,8,0,56,0,0,0,56,0,0,0,,,,2013-01-09 08:00,2013-01-15 17:00,,2013-01-08 08:00,2013-01-14 17:00,2013-01-08 08:00,2013-01-14 17:00,2013-01-08 08:00,2013-01-14 17:00,,2013-01-09 08:00,2013-01-15 17:00,,PT_Normal,,,,,IkTMIRga3UmOMXoXGdaNPw,TDOI8mtiiUiiiGgmsJOE5A,,,Y,0,0,,,2012-09-26 11:27,2012-10-03 16:55,admin,admin
8,158888,7529,26743,794,1,0,N,N,N,CP_Drtn,TT_Task,DT_FixedDUR2,RV_OK,TK_NotStart,A-65,Slab on grade,,8,0,56,0,0,0,56,0,0,0,,,,2013-01-16 08:00,2013-01-22 17:00,,2013-01-15 08:00,2013-01-21 17:00,2013-01-15 08:00,2013-01-21 17:00,2013-01-15 08:00,2013-01-21 17:00,,2013-01-16 08:00,2013-01-22 17:00,,PT_Normal,,,,,WyRgu5+dS0aNT115qZZv9g,N+FmR7GyxUqEPfaDHOIj7w,,,Y,0,0,,,2012-09-26 11:27,2012-10-03 16:55,admin,admin
9,158889,7529,26743,794,1,0,N,N,N,CP_Drtn,TT_Task,DT_FixedDUR2,RV_OK,TK_NotStart,A-70,Basement floor R.C slab,,8,0,200,0,0,0,200,0,0,0,,,,2013-01-23 08:00,2013-02-16 17:00,,2013-01-22 08:00,2013-02-15 17:00,2013-01-22 08:00,2013-02-15 17:00,2013-01-22 08:00,2013-02-15 17:00,,2013-01-23 08:00,2013-02-16 17:00,,PT_Normal,,,,,vyFdUbxUqk2dQXx0TOjtbg,w2uf+7esZkG/eCYDjxp6RA,,,Y,0,0,,,2012-09-26 11:27,2012-10-03 16:55,admin,admin
10,158890,7529,26744,794,1,0,N,N,N,CP_Drtn,TT_Task,DT_FixedDUR2,RV_OK,TK_NotStart,A-83,Ground floor columns,,8,0,112,0,0,0,112,0,0,0,,,,2013-02-17 08:00,2013-03-02 17:00,,2013-02-16 08:00,2013-03-01 17:00,2013-02-16 08:00,2013-03-01 17:00,2013-02-16 08:00,2013-03-01 17:00,,2013-02-17 08:00,2013-03-02 17:00,,PT_Normal,,,,,qhPAjOdJ10eMLnOctWoY6A,ZQbUThkirkKbnMfzzwPBww,,,Y,0,0,,,2012-09-26 11:27,2012-10-03 16:55,admin,admin
11,158891,7529,26744,794,1,0,N,N,N,CP_Drtn,TT_Task,DT_FixedDUR2,RV_OK,TK_NotStart,A-88,Ground floor slab,,8,0,200,0,0,0,200,0,0,0,,,,2013-03-03 08:00,2013-03-27 17:00,,2013-03-02 08:00,2013-03-26 17:00,2013-03-02 08:00,2013-03-26 17:00,2013-03-02 08:00,2013-03-26 17:00,,2013-03-03 08:00,2013-03-27 17:00,,PT_Normal,,,,,0420jGRgbkOvqBIzRvi8MA,SpVYPL1d30eXhVekwBRYGA,,,Y,0,0,,,2012-09-26 11:27,2012-10-03 16:55,admin,admin
12,158892,7529,26745,794,1,0,N,N,N,CP_Drtn,TT_Task,DT_FixedDUR2,RV_OK,TK_NotStart,A-98,First floor columns,,8,0,112,0,0,0,112,0,0,0,,,,2013-03-28 08:00,2013-04-10 17:00,,2013-03-27 08:00,2013-04-09 17:00,2013-03-27 08:00,2013-04-09 17:00,2013-03-27 08:00,2013-04-09 17:00,,2013-03-28 08:00,2013-04-10 17:00,,PT_Normal,,,,,HuLMgmdrOk6BA9C36c7kEA,4xcDXZUCgUW1Msi8Wu8L7A,,,Y,0,0,,,2012-09-26 11:27,2012-10-03 16:55,admin,admin
13,158893,7529,26745,794,1,0,N,N,N,CP_Drtn,TT_Task,DT_FixedDUR2,RV_OK,TK_NotStart,A-100,First floor slab,,8,0,200,0,0,0,200,0,0,0,,,,2013-04-11 08:00,2013-05-05 17:00,,2013-04-10 08:00,2013-05-04 17:00,2013-04-10 08:00,2013-05-04 17:00,2013-04-10 08:00,2013-05-04 17:00,,2013-04-11 08:00,2013-05-05 17:00,,PT_Normal,,,,,4f5rDNXIuEWZGQQ2Jo1yWQ,aydNozC9skyZb9mtLhFOMw,,,Y,0,0,,,2012-09-26 11:27,2012-10-03 16:55,admin,admin
14,158894,7529,26746,794,1,0,N,N,N,CP_Drtn,TT_Task,DT_FixedDUR2,RV_OK,TK_NotStart,A-106,Second floor columns,,8,0,96,0,0,0,96,0,0,0,,,,2013-05-06 08:00,2013-05-17 17:00,,2013-05-05 08:00,2013-05-16 17:00,2013-05-05 08:00,2013-05-16 17:00,2013-05-05 08:00,2013-05-16 17:00,,2013-05-06 08:00,2013-05-17 17:00,,PT_Normal,,,,,QovXmsVTWUiaNjiD+z7D8A,cx/8s3WXW0aTPiZ+MO2RzA,,,Y,0,0,,,2012-09-26 11:27,2012-10-03 16:55,admin,admin
15,158895,7529,26746,794,1,0,N,N,N,CP_Drtn,TT_Task,DT_FixedDUR2,RV_OK,TK_NotStart,A-108,Second floor slab,,8,0,200,0,0,0,200,0,0,0,,,,2013-05-18 08:00,2013-06-11 17:00,,2013-05-17 08:00,2013-06-10 17:00,2013-05-17 08:00,2013-06-10 17:00,2013-05-17 08:00,2013-06-10 17:00,,2013-05-18 08:00,2013-06-11 17:00,,PT_Normal,,,,,u/t4cHs2bEepTRerYqSU4A,g8+trhxPPkSI3Q+tgSZxpA,,,Y,0,0,,,2012-09-26 11:27,2012-10-03 16:55,admin,admin
16,158897,7529,26753,794,1,0,N,N,N,CP_Drtn,TT_Task,DT_FixedDUR2,RV_OK,TK_NotStart,A-117,Insulation works for roof,,440,0,240,0,0,0,240,0,0,0,,,,2013-08-12 08:00,2013-09-10 17:00,,2013-06-18 08:00,2013-07-17 17:00,2013-06-18 08:00,2013-07-17 17:00,2013-06-18 08:00,2013-07-17 17:00,,2013-08-12 08:00,2013-09-10 17:00,,PT_Normal,,,,,Kz0MS7ferkuZUaizA8lMzA,bK6gy2vWyEWMz6XBVptJ0Q,,,N,0,0,,,2012-09-26 11:27,2012-09-27 14:39,admin,admin
17,158909,7529,26753,794,1,0,N,N,N,CP_Drtn,TT_Task,DT_FixedDUR2,RV_OK,TK_NotStart,A-125,Roof tiles,,440,432,160,0,0,0,160,0,0,0,,,,2013-09-11 08:00,2013-09-30 17:00,,2013-07-18 08:00,2013-08-06 17:00,2013-07-18 08:00,2013-08-06 17:00,2013-07-18 08:00,2013-08-06 17:00,,2013-09-11 08:00,2013-09-30 17:00,,PT_Normal,,,,,o35iZGDRZUW0KzTo4HdILA,T3tNcnBnXE6XQP5kxRvpIg,,,N,0,0,,,2012-09-26 11:27,2012-10-03 16:55,admin,admin
18,158915,7529,26747,794,1,0,N,N,N,CP_Drtn,TT_Task,DT_FixedDUR2,RV_OK,TK_NotStart,A-115,Roof Parapet,,440,0,56,0,0,0,56,0,0,0,,,,2013-08-05 08:00,2013-08-11 17:00,,2013-06-11 08:00,2013-06-17 17:00,2013-06-11 08:00,2013-06-17 17:00,2013-06-11 08:00,2013-06-17 17:00,,2013-08-05 08:00,2013-08-11 17:00,,PT_Normal,,,,,SzCGrK1hp0KQEMyOBQsW9A,VIXtkNGcTUSj/rainnR0lw,,,N,0,0,,,2012-09-26 11:27,2012-09-27 14:39,admin,admin
19,158916,7529,26749,794,1,0,N,N,N,CP_Drtn,TT_Task,DT_FixedDUR2,RV_OK,TK_NotStart,A-101,Masonry Works,,312,0,160,0,0,0,160,0,0,0,,,,2013-05-19 08:00,2013-06-07 17:00,,2013-04-10 08:00,2013-04-29 17:00,2013-04-10 08:00,2013-04-29 17:00,2013-04-10 08:00,2013-04-29 17:00,,2013-05-19 08:00,2013-06-07 17:00,,PT_Normal,,,,,fmOI7r/laEa/EUUEMofcPA,94UbSiaXjE+IE5ujc2zkFA,,,N,0,0,,,2012-09-26 11:27,2012-09-27 17:06,admin,admin
20,158917,7529,26749,794,1,0,N,N,N,CP_Drtn,TT_Task,DT_FixedDUR2,RV_OK,TK_NotStart,A-105,Internal Plaster Works,,312,0,200,0,0,0,200,0,0,0,,,,2013-06-08 08:00,2013-07-02 17:00,,2013-04-30 08:00,2013-05-24 17:00,2013-04-30 08:00,2013-05-24 17:00,2013-04-30 08:00,2013-05-24 17:00,,2013-06-08 08:00,2013-07-02 17:00,,PT_Normal,,,,,TX1UB7iSHUGuxBkOyp8tXg,qxh6m2ugAkG9cr6TDLhVmg,,,N,0,0,,,2012-09-26 11:27,2012-09-27 17:06,admin,admin
21,158919,7529,26749,794,1,0,N,N,N,CP_Drtn,TT_Task,DT_FixedDUR2,RV_OK,TK_NotStart,A-111,"Floors Works( Ceramic, Marble)",,616,0,200,0,0,0,200,0,0,0,,,,2013-08-10 08:00,2013-09-03 17:00,,2013-05-25 08:00,2013-06-18 17:00,2013-05-25 08:00,2013-06-18 17:00,2013-05-25 08:00,2013-06-18 17:00,,2013-08-10 08:00,2013-09-03 17:00,,PT_Normal,,,,,ygpC6jHlakak4iy1UF6UGw,m2JRQppkcU67SVH7S3+3lA,,,N,0,0,,,2012-09-26 11:27,2012-10-03 16:21,admin,admin
22,158920,7529,26749,794,1,0,N,N,N,CP_Drtn,TT_Task,DT_FixedDUR2,RV_OK,TK_NotStart,A-116,Stairs finishes,,776,768,80,0,0,0,80,0,0,0,,,,2013-09-21 08:00,2013-09-30 17:00,,2013-06-16 08:00,2013-06-25 17:00,2013-06-16 08:00,2013-06-25 17:00,2013-06-16 08:00,2013-06-25 17:00,,2013-09-21 08:00,2013-09-30 17:00,,PT_Normal,,,,,ckyJ//rH5Uq1aRMtqpHAng,zbpVbfQQZUiLqsHMnfmt0g,,,N,0,0,,,2012-09-26 11:27,2012-10-03 16:55,admin,admin
23,158922,7529,26749,794,1,0,N,N,N,CP_Drtn,TT_Task,DT_FixedDUR2,RV_OK,TK_NotStart,A-119,Suspend Ceilings works,,696,64,96,0,0,0,96,0,0,0,,,,2013-09-14 08:00,2013-09-25 17:00,,2013-06-19 08:00,2013-06-30 17:00,2013-06-19 08:00,2013-06-30 17:00,2013-06-19 08:00,2013-06-30 17:00,,2013-09-14 08:00,2013-09-25 17:00,,PT_Normal,,,,,V8CUIjOzgkKYol0BnjfBwg,At1w8vwiMU+F4JwSK82FvQ,,,N,0,0,,,2012-09-26 11:27,2012-09-27 14:39,admin,admin
24,158923,7529,26749,794,1,0,N,N,N,CP_Drtn,TT_Task,DT_FixedDUR2,RV_OK,TK_NotStart,A-120,Paints Works,,632,624,200,0,0,0,200,0,0,0,,,,2013-09-06 08:00,2013-09-30 17:00,,2013-06-19 08:00,2013-07-13 17:00,2013-06-19 08:00,2013-07-13 17:00,2013-06-19 08:00,2013-07-13 17:00,,2013-09-06 08:00,2013-09-30 17:00,,PT_Normal,,,,,NNdBudWzBEqXumqFvk2dBQ,xhDdtmCdyEih4ZjqfwMalQ,,,N,0,0,,,2012-09-26 11:27,2012-10-03 16:55,admin,admin
25,158924,7529,26749,794,1,0,N,N,N,CP_Drtn,TT_Task,DT_FixedDUR2,RV_OK,TK_NotStart,A-113,Doors&windows Works,,616,608,128,0,0,0,128,0,0,0,,,,2013-09-15 08:00,2013-09-30 17:00,,2013-06-30 08:00,2013-07-15 17:00,2013-06-30 08:00,2013-07-15 17:00,2013-06-30 08:00,2013-07-15 17:00,,2013-09-15 08:00,2013-09-30 17:00,,PT_Normal,,,,,CUkq35VNNUi5v06j+e/Ylw,wLAx8+q3t0iE9xzlsjm4rQ,,,N,0,0,,,2012-09-26 11:27,2012-10-03 16:55,admin,admin
26,158938,7529,26749,794,1,0,N,N,N,CP_Drtn,TT_Task,DT_FixedDUR2,RV_OK,TK_NotStart,A-118,Metal Works,,616,0,120,0,0,0,120,0,0,0,,,,2013-09-03 08:00,2013-09-17 17:00,,2013-06-18 08:00,2013-07-02 17:00,2013-06-18 08:00,2013-07-02 17:00,2013-06-18 08:00,2013-07-02 17:00,,2013-09-03 08:00,2013-09-17 17:00,,PT_Normal,,,,,HImQsjMr1EeTS6BfouDUaw,HNWnGRWA+EyEeQjZ4m+dpw,,,N,0,0,,,2012-09-26 11:27,2012-10-03 16:21,admin,admin
27,158965,7529,26755,794,1,0,N,N,N,CP_Drtn,TT_Task,DT_FixedDUR2,RV_OK,TK_NotStart,A-69,Soil replacement,,552,0,56,0,0,0,56,0,0,0,,,,2013-03-30 08:00,2013-04-05 17:00,,2013-01-20 08:00,2013-01-26 17:00,2013-01-20 08:00,2013-01-26 17:00,2013-01-20 08:00,2013-01-26 17:00,,2013-03-30 08:00,2013-04-05 17:00,,PT_Normal,,,,,gvUId9lQREC71IxONXKYjw,6kzFP72jXkSNPqOHo5dfvg,,,N,0,0,,,2012-09-26 11:43,2012-09-27 14:39,admin,admin
28,158966,7529,26755,794,1,0,N,N,N,CP_Drtn,TT_Task,DT_FixedDUR2,RV_OK,TK_NotStart,A-73,P.C  footings,,552,0,56,0,0,0,56,0,0,0,,,,2013-04-06 08:00,2013-04-12 17:00,,2013-01-27 08:00,2013-02-02 17:00,2013-01-27 08:00,2013-02-02 17:00,2013-01-27 08:00,2013-02-02 17:00,,2013-04-06 08:00,2013-04-12 17:00,,PT_Normal,,,,,egVtmyDGqkWL0E1eqtsIfg,qPvrBLicWUiySZeX2WfixA,,,N,0,0,,,2012-09-26 11:43,2012-10-04 11:21,admin,admin
29,158967,7529,26755,794,1,0,N,N,N,CP_Drtn,TT_Task,DT_FixedDUR2,RV_OK,TK_NotStart,A-77,R.C footings,,552,0,112,0,0,0,112,0,0,0,,,,2013-04-13 08:00,2013-04-26 17:00,,2013-02-03 08:00,2013-02-16 17:00,2013-02-03 08:00,2013-02-16 17:00,2013-02-03 08:00,2013-02-16 17:00,,2013-04-13 08:00,2013-04-26 17:00,,PT_Normal,,,,,VKKotZt6mkWEZDIvEYlfJg,AC8IHVDHNUeZLBZUdUGKWg,,,N,0,0,,,2012-09-26 11:43,2012-09-27 14:39,admin,admin
30,158968,7529,26755,794,1,0,N,N,N,CP_Drtn,TT_Task,DT_FixedDUR2,RV_OK,TK_NotStart,A-85,R.C columns,,552,0,80,0,0,0,80,0,0,0,,,,2013-04-27 08:00,2013-05-06 17:00,,2013-02-17 08:00,2013-02-26 17:00,2013-02-17 08:00,2013-02-26 17:00,2013-02-17 08:00,2013-02-26 17:00,,2013-04-27 08:00,2013-05-06 17:00,,PT_Normal,,,,,0bIlBKwMNUe5G4psIkzdvQ,61YzvNpnp0OQpoYlw/MrvA,,,N,0,0,,,2012-09-26 11:43,2012-09-27 14:39,admin,admin
31,158969,7529,26755,794,1,0,N,N,N,CP_Drtn,TT_Task,DT_FixedDUR2,RV_OK,TK_NotStart,A-87,Bituminous insulation,,552,0,40,0,0,0,40,0,0,0,,,,2013-05-07 08:00,2013-05-11 17:00,,2013-02-27 08:00,2013-03-03 17:00,2013-02-27 08:00,2013-03-03 17:00,2013-02-27 08:00,2013-03-03 17:00,,2013-05-07 08:00,2013-05-11 17:00,,PT_Normal,,,,,CoFN3pkBoUqqXDKrgeTq+Q,f16DiZ6tC0qXtqT5JMlFkA,,,N,0,0,,,2012-09-26 11:43,2012-09-27 14:39,admin,admin
32,158970,7529,26755,794,1,0,N,N,N,CP_Drtn,TT_Task,DT_FixedDUR2,RV_OK,TK_NotStart,A-64,Excavation,,552,0,56,0,0,0,56,0,0,0,,,,2013-03-23 08:00,2013-03-29 17:00,,2013-01-13 08:00,2013-01-19 17:00,2013-01-13 08:00,2013-01-19 17:00,2013-01-13 08:00,2013-01-19 17:00,,2013-03-23 08:00,2013-03-29 17:00,,PT_Normal,,,,,6Cwh2UeAY0GK9KcBjihhoQ,CVuYHtNnaEauT7rPY52vIA,,,N,0,0,,,2012-09-26 11:43,2012-09-27 14:39,admin,admin
33,158971,7529,26755,794,1,0,N,N,N,CP_Drtn,TT_Task,DT_FixedDUR2,RV_OK,TK_NotStart,A-90,Masonry under slab on grade,,552,0,80,0,0,0,80,0,0,0,,,,2013-05-12 08:00,2013-05-21 17:00,,2013-03-04 08:00,2013-03-13 17:00,2013-03-04 08:00,2013-03-13 17:00,2013-03-04 08:00,2013-03-13 17:00,,2013-05-12 08:00,2013-05-21 17:00,,PT_Normal,,,,,uAK3Fb+z/UeO8iBs6zBW8w,WPg1r5qpvUWhV0HikxI36Q,,,N,0,0,,,2012-09-26 11:43,2012-09-27 14:39,admin,admin
34,158972,7529,26755,794,1,0,N,N,N,CP_Drtn,TT_Task,DT_FixedDUR2,RV_OK,TK_NotStart,A-92,Backfilling around foundation,,552,0,40,0,0,0,40,0,0,0,,,,2013-05-22 08:00,2013-05-26 17:00,,2013-03-14 08:00,2013-03-18 17:00,2013-03-14 08:00,2013-03-18 17:00,2013-03-14 08:00,2013-03-18 17:00,,2013-05-22 08:00,2013-05-26 17:00,,PT_Normal,,,,,QV7Krq+NKEauw0AxiOhIxw,kV5ARJS/tkSQT4E3H1CICw,,,N,0,0,,,2012-09-26 11:43,2012-09-27 14:39,admin,admin
35,158973,7529,26755,794,1,0,N,N,N,CP_Drtn,TT_Task,DT_FixedDUR2,RV_OK,TK_NotStart,A-94,Slab on grade,,552,0,56,0,0,0,56,0,0,0,,,,2013-05-27 08:00,2013-06-02 17:00,,2013-03-19 08:00,2013-03-25 17:00,2013-03-19 08:00,2013-03-25 17:00,2013-03-19 08:00,2013-03-25 17:00,,2013-05-27 08:00,2013-06-02 17:00,,PT_Normal,,,,,Iohcqw9Fm0W46DjLRi0wFA,W/4mLqIwB02eV35Ch8IFdQ,,,N,0,0,,,2012-09-26 11:43,2012-09-27 14:39,admin,admin
36,158974,7529,26755,794,1,0,N,N,N,CP_Drtn,TT_Task,DT_FixedDUR2,RV_OK,TK_NotStart,A-97,Ground floor R.C slab,,552,0,160,0,0,0,160,0,0,0,,,,2013-06-03 08:00,2013-06-22 17:00,,2013-03-26 08:00,2013-04-14 17:00,2013-03-26 08:00,2013-04-14 17:00,2013-03-26 08:00,2013-04-14 17:00,,2013-06-03 08:00,2013-06-22 17:00,,PT_Normal,,,,,175v9iTbIkmhyjC9HOcnmg,M4Pdu+VH9E+LDLlOvtslMQ,,,N,0,0,,,2012-09-26 11:43,2012-09-27 14:39,admin,admin
37,158975,7529,26756,794,1,0,N,N,N,CP_Drtn,TT_Task,DT_FixedDUR2,RV_OK,TK_NotStart,A-102,Masonry works,,552,0,160,0,0,0,160,0,0,0,,,,2013-06-23 08:00,2013-07-12 17:00,,2013-04-15 08:00,2013-05-04 17:00,2013-04-15 08:00,2013-05-04 17:00,2013-04-15 08:00,2013-05-04 17:00,,2013-06-23 08:00,2013-07-12 17:00,,PT_Normal,,,,,4vKm04j1s0mbqoP88X8tTw,+7rk84hn+kGhW4e0HbWePA,,,N,0,0,,,2012-09-26 11:43,2012-09-27 14:39,admin,admin
38,158976,7529,26756,794,1,0,N,N,N,CP_Drtn,TT_Task,DT_FixedDUR2,RV_OK,TK_NotStart,A-107,Plaster works,,552,0,160,0,0,0,160,0,0,0,,,,2013-07-13 08:00,2013-08-01 17:00,,2013-05-05 08:00,2013-05-24 17:00,2013-05-05 08:00,2013-05-24 17:00,2013-05-05 08:00,2013-05-24 17:00,,2013-07-13 08:00,2013-08-01 17:00,,PT_Normal,,,,,2xDWhTK/LkCKZKGiZufJeQ,jTeCilyH0EOwVDwOmvEotQ,,,N,0,0,,,2012-09-26 11:43,2012-09-27 14:39,admin,admin
39,158977,7529,26756,794,1,0,N,N,N,CP_Drtn,TT_Task,DT_FixedDUR2,RV_OK,TK_NotStart,A-112,Finishing works,,552,544,480,0,0,0,480,0,0,0,,,,2013-08-02 08:00,2013-09-30 17:00,,2013-05-25 08:00,2013-07-23 17:00,2013-05-25 08:00,2013-07-23 17:00,2013-05-25 08:00,2013-07-23 17:00,,2013-08-02 08:00,2013-09-30 17:00,,PT_Normal,,,,,gDny4fkDvk6Knzcu3MNX8w,agxSxrWedEWJfEixrY7ibw,,,N,0,0,,,2012-09-26 11:43,2012-10-03 16:55,admin,admin
40,158978,7529,26757,794,1,0,N,N,N,CP_Drtn,TT_Task,DT_FixedDUR2,RV_OK,TK_NotStart,A-19,Excavation,,80,0,80,0,0,0,80,0,0,0,,,,2013-03-24 08:00,2013-04-02 17:00,,2013-03-14 08:00,2013-03-23 17:00,2013-03-14 08:00,2013-03-23 17:00,2013-03-14 08:00,2013-03-23 17:00,,2013-03-24 08:00,2013-04-02 17:00,,PT_Normal,,,,,nPybZHOQjkuEdGBlLTSVFQ,0um7Upyk90KtrqIOO9sB8Q,,,N,0,0,,,2012-09-26 11:43,2012-10-04 11:19,admin,admin
41,158979,7529,26757,794,1,0,N,N,N,CP_Drtn,TT_Task,DT_FixedDUR2,RV_OK,TK_NotStart,A-23,Soil replacement,,80,0,96,0,0,0,96,0,0,0,,,,2013-04-03 08:00,2013-04-14 17:00,,2013-03-24 08:00,2013-04-04 17:00,2013-03-24 08:00,2013-04-04 17:00,2013-03-24 08:00,2013-04-04 17:00,,2013-04-03 08:00,2013-04-14 17:00,,PT_Normal,,,,,j0YXfwzcx0WOtrWrQMUcrQ,J5TvLTIuB0KQ3GoNmwqcIw,,,N,0,0,,,2012-09-26 11:43,2012-10-04 11:19,admin,admin
42,158980,7529,26757,794,1,0,N,N,N,CP_Drtn,TT_Task,DT_FixedDUR2,RV_OK,TK_NotStart,A-32,P.C footings,,80,0,120,0,0,0,120,0,0,0,,,,2013-04-15 08:00,2013-04-29 17:00,,2013-04-05 08:00,2013-04-19 17:00,2013-04-05 08:00,2013-04-19 17:00,2013-04-05 08:00,2013-04-19 17:00,,2013-04-15 08:00,2013-04-29 17:00,,PT_Normal,,,,,69MPZZEyv0yvhE7rjVQ89g,KloI+defq0yG7ldAXsxuwQ,,,N,0,0,,,2012-09-26 11:43,2012-10-04 11:19,admin,admin
43,158981,7529,26757,794,1,0,N,N,N,CP_Drtn,TT_Task,DT_FixedDUR2,RV_OK,TK_NotStart,A-35,R.C footings,,80,0,200,0,0,0,200,0,0,0,,,,2013-04-30 08:00,2013-05-24 17:00,,2013-04-20 08:00,2013-05-14 17:00,2013-04-20 08:00,2013-05-14 17:00,2013-04-20 08:00,2013-05-14 17:00,,2013-04-30 08:00,2013-05-24 17:00,,PT_Normal,,,,,VbZB8Janc0K1k2ZoPFF3fw,o+vU3f5C00SML19GNAMBtg,,,N,0,0,,,2012-09-26 11:43,2012-10-04 11:19,admin,admin
44,158982,7529,26757,794,1,0,N,N,N,CP_Drtn,TT_Task,DT_FixedDUR2,RV_OK,TK_NotStart,A-49,R.C walls,,80,0,320,0,0,0,320,0,0,0,,,,2013-05-25 08:00,2013-07-03 17:00,,2013-05-15 08:00,2013-06-23 17:00,2013-05-15 08:00,2013-06-23 17:00,2013-05-15 08:00,2013-06-23 17:00,,2013-05-25 08:00,2013-07-03 17:00,,PT_Normal,,,,,b3cnl1QXGkOs7LRCjXleOA,OX5cSi9lOEyPh+WEJGKDWg,,,N,0,0,,,2012-09-26 11:43,2012-10-04 11:19,admin,admin
45,158983,7529,26757,794,1,0,N,N,N,CP_Drtn,TT_Task,DT_FixedDUR2,RV_OK,TK_NotStart,A-71,R.C slab,,80,0,160,0,0,0,160,0,0,0,,,,2013-07-04 08:00,2013-07-23 17:00,,2013-06-24 08:00,2013-07-13 17:00,2013-06-24 08:00,2013-07-13 17:00,2013-06-24 08:00,2013-07-13 17:00,,2013-07-04 08:00,2013-07-23 17:00,,PT_Normal,,,,,M5zreuSk7UWe7kt37m7S0g,MmUCkpIPNE+pG3mm9ajdCw,,,N,0,0,,,2012-09-26 11:43,2012-10-04 11:19,admin,admin
46,158984,7529,26757,794,1,0,N,N,N,CP_Drtn,TT_Task,DT_FixedDUR2,RV_OK,TK_NotStart,A-91,Insulation works,,80,0,240,0,0,0,240,0,0,0,,,,2013-08-18 08:00,2013-09-16 17:00,,2013-08-08 08:00,2013-09-06 17:00,2013-08-08 08:00,2013-09-06 17:00,2013-08-08 08:00,2013-09-06 17:00,,2013-08-18 08:00,2013-09-16 17:00,,PT_Normal,,,,,CPQdSAAtVU+Nqh78Sh6Okg,cg3qDCFpO0icS7yUx8c4uw,,,N,0,0,,,2012-09-26 11:43,2012-10-04 11:19,admin,admin
47,158985,7529,26757,794,1,0,N,N,N,CP_Drtn,TT_Task,DT_FixedDUR2,RV_OK,TK_NotStart,A-81,Masonry works,,80,0,200,0,0,0,200,0,0,0,,,,2013-07-24 08:00,2013-08-17 17:00,,2013-07-14 08:00,2013-08-07 17:00,2013-07-14 08:00,2013-08-07 17:00,2013-07-14 08:00,2013-08-07 17:00,,2013-07-24 08:00,2013-08-17 17:00,,PT_Normal,,,,,h+pJA+lCS0K8DMcLRVXfcQ,bJLCQw68VUyse4BEj0AslQ,,,N,0,0,,,2012-09-26 11:43,2012-10-04 11:19,admin,admin
48,158986,7529,26758,794,1,0,N,N,N,CP_Drtn,TT_Task,DT_FixedDUR2,RV_OK,TK_NotStart,A-1,Excavation,,208,0,160,0,0,0,160,0,0,0,,,,2013-03-10 08:00,2013-03-29 17:00,,2013-02-12 08:00,2013-03-03 17:00,2013-02-12 08:00,2013-03-03 17:00,2013-02-12 08:00,2013-03-03 17:00,,2013-03-10 08:00,2013-03-29 17:00,,PT_Normal,,,,,zaPj0tYMrkudubAVeLJWPg,wSz8JREdAUqpNsatlKd4HQ,,,N,0,0,,,2012-09-26 11:43,2012-10-03 16:44,admin,admin
49,158988,7529,26758,794,1,0,N,N,N,CP_Drtn,TT_Task,DT_FixedDUR2,RV_OK,TK_NotStart,A-24,P.C footings,,208,0,240,0,0,0,240,0,0,0,,,,2013-03-30 08:00,2013-04-28 17:00,,2013-03-04 08:00,2013-04-02 17:00,2013-03-04 08:00,2013-04-02 17:00,2013-03-04 08:00,2013-04-02 17:00,,2013-03-30 08:00,2013-04-28 17:00,,PT_Normal,,,,,p5ywOHCDrUW4zF/Uz2NQeQ,6vPNTZXG00GUAgf1e544aA,,,N,0,0,,,2012-09-26 11:43,2012-10-03 16:44,admin,admin
50,158989,7529,26758,794,1,0,N,N,N,CP_Drtn,TT_Task,DT_FixedDUR2,RV_OK,TK_NotStart,A-30,R.C footings,,208,0,240,0,0,0,240,0,0,0,,,,2013-04-09 08:00,2013-05-08 17:00,,2013-03-14 08:00,2013-04-12 17:00,2013-03-14 08:00,2013-04-12 17:00,2013-03-14 08:00,2013-04-12 17:00,,2013-04-09 08:00,2013-05-08 17:00,,PT_Normal,,,,,PWdfl2ErIUaGe452jlIkCA,H94yE5c13kGyICPOLS+n+Q,,,N,0,0,,,2012-09-26 11:43,2012-10-03 16:44,admin,admin
51,158990,7529,26758,794,1,0,N,N,N,CP_Drtn,TT_Task,DT_FixedDUR2,RV_OK,TK_NotStart,A-33,R.C columns,,208,0,240,0,0,0,240,0,0,0,,,,2013-04-19 08:00,2013-05-18 17:00,,2013-03-24 08:00,2013-04-22 17:00,2013-03-24 08:00,2013-04-22 17:00,2013-03-24 08:00,2013-04-22 17:00,,2013-04-19 08:00,2013-05-18 17:00,,PT_Normal,,,,,aIcfZAN4ykSS0y/VfFFUNw,vBfYr5aeakW6J7aLO+Ixlw,,,N,0,0,,,2012-09-26 11:43,2012-10-03 16:44,admin,admin
52,158991,7529,26758,794,1,0,N,N,N,CP_Drtn,TT_Task,DT_FixedDUR2,RV_OK,TK_NotStart,A-51,Bituminous insulation,,208,0,120,0,0,0,120,0,0,0,,,,2013-05-19 08:00,2013-06-02 17:00,,2013-04-23 08:00,2013-05-07 17:00,2013-04-23 08:00,2013-05-07 17:00,2013-04-23 08:00,2013-05-07 17:00,,2013-05-19 08:00,2013-06-02 17:00,,PT_Normal,,,,,iOH10RQLQ0+J8ODIKsC5Qg,zQpd7Mqv/k+HJSvpHiL87A,,,N,0,0,,,2012-09-26 11:43,2012-10-03 16:44,admin,admin
53,158992,7529,26758,794,1,0,N,N,N,CP_Drtn,TT_Task,DT_FixedDUR2,RV_OK,TK_NotStart,A-57,Backfilling around foundation,,208,0,160,0,0,0,160,0,0,0,,,,2013-06-03 08:00,2013-06-22 17:00,,2013-05-08 08:00,2013-05-27 17:00,2013-05-08 08:00,2013-05-27 17:00,2013-05-08 08:00,2013-05-27 17:00,,2013-06-03 08:00,2013-06-22 17:00,,PT_Normal,,,,,bw/nu7UJ40mdFI5/XV4xmg,xODYguRhwEC9zsaChN/PlQ,,,N,0,0,,,2012-09-26 11:43,2012-10-03 16:44,admin,admin
54,158993,7529,26758,794,1,0,N,N,N,CP_Drtn,TT_Task,DT_FixedDUR2,RV_OK,TK_NotStart,A-66,Masonry works,,208,0,160,0,0,0,160,0,0,0,,,,2013-06-23 08:00,2013-07-12 17:00,,2013-05-28 08:00,2013-06-16 17:00,2013-05-28 08:00,2013-06-16 17:00,2013-05-28 08:00,2013-06-16 17:00,,2013-06-23 08:00,2013-07-12 17:00,,PT_Normal,,,,,iSweBiJJD0itQHhrY6BP2A,/hypUxXOx0GaNGCf2hXMmA,,,N,0,0,,,2012-09-26 11:43,2012-10-03 16:44,admin,admin
55,158994,7529,26758,794,1,0,N,N,N,CP_Drtn,TT_Task,DT_FixedDUR2,RV_OK,TK_NotStart,A-76,Stainless steel pipes,,208,0,240,0,0,0,240,0,0,0,,,,2013-07-13 08:00,2013-08-11 17:00,,2013-06-17 08:00,2013-07-16 17:00,2013-06-17 08:00,2013-07-16 17:00,2013-06-17 08:00,2013-07-16 17:00,,2013-07-13 08:00,2013-08-11 17:00,,PT_Normal,,,,,lvRv+Vpls0K1aCMP2T6rJw,qqheEhIL7EW0XrbNATPPdw,,,N,0,0,,,2012-09-26 11:43,2012-10-03 16:44,admin,admin
56,158995,7529,26758,794,1,0,N,N,N,CP_Drtn,TT_Task,DT_FixedDUR2,RV_OK,TK_NotStart,A-89,Plaster works,,208,0,200,0,0,0,200,0,0,0,,,,2013-08-12 08:00,2013-09-05 17:00,,2013-07-17 08:00,2013-08-10 17:00,2013-07-17 08:00,2013-08-10 17:00,2013-07-17 08:00,2013-08-10 17:00,,2013-08-12 08:00,2013-09-05 17:00,,PT_Normal,,,,,g0Txc2MF6Uu60r3r9MqE1w,ONJqOj6z8Emq0QWCUJ1+6A,,,N,0,0,,,2012-09-26 11:43,2012-10-03 16:44,admin,admin
57,158996,7529,26758,794,1,0,N,N,N,CP_Drtn,TT_Task,DT_FixedDUR2,RV_OK,TK_NotStart,A-95,Gates erection,,208,200,200,0,0,0,200,0,0,0,,,,2013-09-06 08:00,2013-09-30 17:00,,2013-08-11 08:00,2013-09-04 17:00,2013-08-11 08:00,2013-09-04 17:00,2013-08-11 08:00,2013-09-04 17:00,,2013-09-06 08:00,2013-09-30 17:00,,PT_Normal,,,,,3cHMW6GGcEqyrkgSiAC3GA,y2j+xyc+FUS1g3ozlOpF5w,,,N,0,0,,,2012-09-26 11:43,2012-10-03 16:55,admin,admin
58,158997,7529,26758,794,1,0,N,N,N,CP_Drtn,TT_Task,DT_FixedDUR2,RV_OK,TK_NotStart,A-96,dry mix paintings,,248,240,160,0,0,0,160,0,0,0,,,,2013-09-11 08:00,2013-09-30 17:00,,2013-08-11 08:00,2013-08-30 17:00,2013-08-11 08:00,2013-08-30 17:00,2013-08-11 08:00,2013-08-30 17:00,,2013-09-11 08:00,2013-09-30 17:00,,PT_Normal,,,,,ajSHCnLH8kmZwEwmI/3Xnw,jtZsy54Z0EqV/bQEmv+t5g,,,N,0,0,,,2012-09-26 11:43,2012-10-03 16:55,admin,admin
59,159008,7529,26750,794,1,0,N,N,N,CP_Drtn,TT_Task,DT_FixedDUR2,RV_OK,TK_NotStart,A-109,Masonry Works,,304,0,160,0,0,0,160,0,0,0,,,,2013-06-26 08:00,2013-07-15 17:00,,2013-05-19 08:00,2013-06-07 17:00,2013-05-19 08:00,2013-06-07 17:00,2013-05-19 08:00,2013-06-07 17:00,,2013-06-26 08:00,2013-07-15 17:00,,PT_Normal,,,,,Jk3ItZ4ueUGQq7BL6GZ2qA,fmOI7r/laEa/EUUEMofcPA,,,N,0,0,,,2012-09-26 12:37,2012-10-03 16:20,admin,admin
60,159009,7529,26750,794,1,0,N,N,N,CP_Drtn,TT_Task,DT_FixedDUR2,RV_OK,TK_NotStart,A-114,Internal Plaster Works,,304,0,200,0,0,0,200,0,0,0,,,,2013-07-16 08:00,2013-08-09 17:00,,2013-06-08 08:00,2013-07-02 17:00,2013-06-08 08:00,2013-07-02 17:00,2013-06-08 08:00,2013-07-02 17:00,,2013-07-16 08:00,2013-08-09 17:00,,PT_Normal,,,,,0f+bL0mP9EObclFr+Ttx2A,TX1UB7iSHUGuxBkOyp8tXg,,,N,0,0,,,2012-09-26 12:37,2012-10-03 16:20,admin,admin
61,159010,7529,26750,794,1,0,N,N,N,CP_Drtn,TT_Task,DT_FixedDUR2,RV_OK,TK_NotStart,A-122,"Floors Works( Ceramic, Marble)",,304,0,200,0,0,0,200,0,0,0,,,,2013-08-10 08:00,2013-09-03 17:00,,2013-07-03 08:00,2013-07-27 17:00,2013-07-03 08:00,2013-07-27 17:00,2013-07-03 08:00,2013-07-27 17:00,,2013-08-10 08:00,2013-09-03 17:00,,PT_Normal,,,,,ewdwusvGbUOpA4O+SC3gfQ,ygpC6jHlakak4iy1UF6UGw,,,N,0,0,,,2012-09-26 12:37,2012-10-03 16:20,admin,admin
62,159011,7529,26750,794,1,0,N,N,N,CP_Drtn,TT_Task,DT_FixedDUR2,RV_OK,TK_NotStart,A-126,Stairs finishes,,464,456,80,0,0,0,80,0,0,0,,,,2013-09-21 08:00,2013-09-30 17:00,,2013-07-25 08:00,2013-08-03 17:00,2013-07-25 08:00,2013-08-03 17:00,2013-07-25 08:00,2013-08-03 17:00,,2013-09-21 08:00,2013-09-30 17:00,,PT_Normal,,,,,aBh2bSub60aUMKekainEaQ,ckyJ//rH5Uq1aRMtqpHAng,,,N,0,0,,,2012-09-26 12:37,2012-10-03 16:55,admin,admin
63,159012,7529,26750,794,1,0,N,N,N,CP_Drtn,TT_Task,DT_FixedDUR2,RV_OK,TK_NotStart,A-128,Suspend Ceilings works,,384,64,96,0,0,0,96,0,0,0,,,,2013-09-14 08:00,2013-09-25 17:00,,2013-07-28 08:00,2013-08-08 17:00,2013-07-28 08:00,2013-08-08 17:00,2013-07-28 08:00,2013-08-08 17:00,,2013-09-14 08:00,2013-09-25 17:00,,PT_Normal,,,,,NdgX50ZRvEK2mJPVVqjnwA,V8CUIjOzgkKYol0BnjfBwg,,,N,0,0,,,2012-09-26 12:37,2012-09-27 14:40,admin,admin
64,159013,7529,26750,794,1,0,N,N,N,CP_Drtn,TT_Task,DT_FixedDUR2,RV_OK,TK_NotStart,A-129,Paints Works,,320,312,200,0,0,0,200,0,0,0,,,,2013-09-06 08:00,2013-09-30 17:00,,2013-07-28 08:00,2013-08-21 17:00,2013-07-28 08:00,2013-08-21 17:00,2013-07-28 08:00,2013-08-21 17:00,,2013-09-06 08:00,2013-09-30 17:00,,PT_Normal,,,,,A7hBcWk8KEmQr8xIQCo2XA,NNdBudWzBEqXumqFvk2dBQ,,,N,0,0,,,2012-09-26 12:37,2012-10-03 16:55,admin,admin
65,159014,7529,26750,794,1,0,N,N,N,CP_Drtn,TT_Task,DT_FixedDUR2,RV_OK,TK_NotStart,A-123,Doors&windows Works,,304,296,128,0,0,0,128,0,0,0,,,,2013-09-15 08:00,2013-09-30 17:00,,2013-08-08 08:00,2013-08-23 17:00,2013-08-08 08:00,2013-08-23 17:00,2013-08-08 08:00,2013-08-23 17:00,,2013-09-15 08:00,2013-09-30 17:00,,PT_Normal,,,,,0I6M7Mw6pkyZ9qCPeLpXDg,CUkq35VNNUi5v06j+e/Ylw,,,N,0,0,,,2012-09-26 12:37,2012-10-03 16:55,admin,admin
66,159015,7529,26750,794,1,0,N,N,N,CP_Drtn,TT_Task,DT_FixedDUR2,RV_OK,TK_NotStart,A-127,Metal Works,,304,0,120,0,0,0,120,0,0,0,,,,2013-09-03 08:00,2013-09-17 17:00,,2013-07-27 08:00,2013-08-10 17:00,2013-07-27 08:00,2013-08-10 17:00,2013-07-27 08:00,2013-08-10 17:00,,2013-09-03 08:00,2013-09-17 17:00,,PT_Normal,,,,,fjlgT+9MlUakpG2j0bUdQA,HImQsjMr1EeTS6BfouDUaw,,,N,0,0,,,2012-09-26 12:37,2012-10-03 16:20,admin,admin
67,159016,7529,26751,794,1,0,N,N,N,CP_Drtn,TT_Task,DT_FixedDUR2,RV_OK,TK_NotStart,A-121,Masonry Works,,8,0,160,0,0,0,160,0,0,0,,,,2013-06-26 08:00,2013-07-15 17:00,,2013-06-25 08:00,2013-07-14 17:00,2013-06-25 08:00,2013-07-14 17:00,2013-06-25 08:00,2013-07-14 17:00,,2013-06-26 08:00,2013-07-15 17:00,,PT_Normal,,,,,GxcqcNaZGkmhTD5PkP9/1g,fmOI7r/laEa/EUUEMofcPA,,,Y,0,0,,,2012-09-26 12:37,2012-10-03 16:55,admin,admin
68,159017,7529,26751,794,1,0,N,N,N,CP_Drtn,TT_Task,DT_FixedDUR2,RV_OK,TK_NotStart,A-124,Internal Plaster Works,,8,0,200,0,0,0,200,0,0,0,,,,2013-07-16 08:00,2013-08-09 17:00,,2013-07-15 08:00,2013-08-08 17:00,2013-07-15 08:00,2013-08-08 17:00,2013-07-15 08:00,2013-08-08 17:00,,2013-07-16 08:00,2013-08-09 17:00,,PT_Normal,,,,,BDHxNw5gG0+GA4QZjzG+hQ,TX1UB7iSHUGuxBkOyp8tXg,,,Y,0,0,,,2012-09-26 12:37,2012-10-03 16:55,admin,admin
69,159018,7529,26751,794,1,0,N,N,N,CP_Drtn,TT_Task,DT_FixedDUR2,RV_OK,TK_NotStart,A-130,"Floors Works( Ceramic, Marble)",,8,0,200,0,0,0,200,0,0,0,,,,2013-08-10 08:00,2013-09-03 17:00,,2013-08-09 08:00,2013-09-02 17:00,2013-08-09 08:00,2013-09-02 17:00,2013-08-09 08:00,2013-09-02 17:00,,2013-08-10 08:00,2013-09-03 17:00,,PT_Normal,,,,,xF9iASAX+EKnZFxwyGDleg,ygpC6jHlakak4iy1UF6UGw,,,Y,0,0,,,2012-09-26 12:37,2012-10-03 16:55,admin,admin
70,159019,7529,26751,794,1,0,N,N,N,CP_Drtn,TT_Task,DT_FixedDUR2,RV_OK,TK_NotStart,A-133,Stairs finishes,,168,160,80,0,0,0,80,0,0,0,,,,2013-09-21 08:00,2013-09-30 17:00,,2013-08-31 08:00,2013-09-09 17:00,2013-08-31 08:00,2013-09-09 17:00,2013-08-31 08:00,2013-09-09 17:00,,2013-09-21 08:00,2013-09-30 17:00,,PT_Normal,,,,,CEQgYbHj8kGBuSZmhnn9rA,ckyJ//rH5Uq1aRMtqpHAng,,,N,0,0,,,2012-09-26 12:37,2012-10-03 16:55,admin,admin
71,159020,7529,26751,794,1,0,N,N,N,CP_Drtn,TT_Task,DT_FixedDUR2,RV_OK,TK_NotStart,A-135,Suspend Ceilings works,,88,64,96,0,0,0,96,0,0,0,,,,2013-09-14 08:00,2013-09-25 17:00,,2013-09-03 08:00,2013-09-14 17:00,2013-09-03 08:00,2013-09-14 17:00,2013-09-03 08:00,2013-09-14 17:00,,2013-09-14 08:00,2013-09-25 17:00,,PT_Normal,,,,,nQ+q8ujzLUSKHzuk/6dMcA,V8CUIjOzgkKYol0BnjfBwg,,,N,0,0,,,2012-09-26 12:37,2012-09-27 14:40,admin,admin
72,159021,7529,26751,794,1,0,N,N,N,CP_Drtn,TT_Task,DT_FixedDUR2,RV_OK,TK_NotStart,A-136,Paints Works,,24,0,200,0,0,0,200,0,0,0,,,,2013-09-06 08:00,2013-09-30 17:00,,2013-09-03 08:00,2013-09-27 17:00,2013-09-03 08:00,2013-09-27 17:00,2013-09-03 08:00,2013-09-27 17:00,,2013-09-06 08:00,2013-09-30 17:00,,PT_Normal,,,,,mn4ymMEgDkK4/+MQOlaKsA,NNdBudWzBEqXumqFvk2dBQ,,,N,0,0,,,2012-09-26 12:37,2012-10-03 16:20,admin,admin
73,159022,7529,26751,794,1,0,N,N,N,CP_Drtn,TT_Task,DT_FixedDUR2,RV_OK,TK_NotStart,A-132,Doors&windows Works,,8,0,128,0,0,0,128,0,0,0,,,,2013-09-15 08:00,2013-09-30 17:00,,2013-09-14 08:00,2013-09-29 17:00,2013-09-14 08:00,2013-09-29 17:00,2013-09-14 08:00,2013-09-29 17:00,,2013-09-15 08:00,2013-09-30 17:00,,PT_Normal,,,,,JR5M1ixu8kyVVzS688JbJw,CUkq35VNNUi5v06j+e/Ylw,,,Y,0,0,,,2012-09-26 12:37,2012-10-03 16:55,admin,admin
74,159023,7529,26751,794,1,0,N,N,N,CP_Drtn,TT_Task,DT_FixedDUR2,RV_OK,TK_NotStart,A-134,Metal Works,,8,0,120,0,0,0,120,0,0,0,,,,2013-09-03 08:00,2013-09-17 17:00,,2013-09-02 08:00,2013-09-16 17:00,2013-09-02 08:00,2013-09-16 17:00,2013-09-02 08:00,2013-09-16 17:00,,2013-09-03 08:00,2013-09-17 17:00,,PT_Normal,,,,,HMithJxF8EKnmDwjP+t1TQ,HImQsjMr1EeTS6BfouDUaw,,,Y,0,0,,,2012-09-26 12:37,2012-10-03 16:55,admin,admin
75,159024,7529,26733,794,1,0,N,N,N,CP_Drtn,TT_Task,DT_FixedDUR2,RV_OK,TK_NotStart,A-2,Mobilization,,8,0,112,0,0,0,112,0,0,0,,,,2012-10-02 08:00,2012-10-15 17:00,,2012-10-01 08:00,2012-10-14 17:00,2012-10-01 08:00,2012-10-14 17:00,2012-10-01 08:00,2012-10-14 17:00,,2012-10-02 08:00,2012-10-15 17:00,,PT_Normal,,,,,xJYzH91HnEmZ2G87/Jx1Yw,,,,Y,0,0,,,2012-09-26 13:21,2012-10-03 16:55,admin,admin
76,159025,7529,26733,794,1,0,N,N,N,CP_Drtn,TT_Task,DT_FixedDUR2,RV_OK,TK_NotStart,A-139,Demobilization,,24,16,56,0,0,0,56,0,0,0,,,,2013-09-24 08:00,2013-09-30 17:00,,2013-09-21 08:00,2013-09-27 17:00,2013-09-21 08:00,2013-09-27 17:00,2013-09-21 08:00,2013-09-27 17:00,,2013-09-24 08:00,2013-09-30 17:00,,PT_Normal,,,,,qIaBr6jGZkWi2wllxy6TFQ,,,,N,0,0,,,2012-09-26 13:21,2012-10-03 16:55,admin,admin
77,159026,7529,26734,794,0,0,N,N,N,CP_Drtn,TT_Mile,DT_FixedDrtn,RV_OK,TK_NotStart,A-3,Letter of acceptance,,8,0,0,0,0,0,0,0,0,0,,,,2012-10-02 08:00,2012-10-02 08:00,,2012-10-01 08:00,2012-10-01 08:00,2012-10-01 08:00,2012-10-01 08:00,2012-10-01 08:00,2012-10-01 08:00,,2012-10-02 08:00,2012-10-02 08:00,,PT_Normal,,,,,O545krkasUSP6UYQO0UZhg,6n41C5wQ2kGwouxH7Klctw,,,Y,0,0,,,2012-09-26 13:22,2012-10-03 16:55,admin,admin
78,159027,7529,26734,794,0,0,N,N,N,CP_Drtn,TT_Mile,DT_FixedDrtn,RV_OK,TK_NotStart,A-4,Site handing over,,8,0,0,0,0,0,0,0,0,0,,,,2012-10-02 08:00,2012-10-02 08:00,,2012-10-01 08:00,2012-10-01 08:00,2012-10-01 08:00,2012-10-01 08:00,2012-10-01 08:00,2012-10-01 08:00,,2012-10-02 08:00,2012-10-02 08:00,,PT_Normal,,,,,ajoFHT1g8UWWpOPgihVchA,4q3LDoatHU6Lumt1WWZOLg,,,Y,0,0,,,2012-09-26 13:22,2012-10-03 16:55,admin,admin
79,159028,7529,26734,794,0,0,N,N,N,CP_Drtn,TT_Mile,DT_FixedDrtn,RV_OK,TK_NotStart,A-5,Contract agreement,,8,0,0,0,0,0,0,0,0,0,,,,2012-10-02 08:00,2012-10-02 08:00,,2012-10-01 08:00,2012-10-01 08:00,2012-10-01 08:00,2012-10-01 08:00,2012-10-01 08:00,2012-10-01 08:00,,2012-10-02 08:00,2012-10-02 08:00,,PT_Normal,,,,,BdoQKTSA9UWZT0fYpSHd9Q,57WW6kJw7kma9xA0rWlwJA,,,Y,0,0,,,2012-09-26 13:22,2012-10-03 16:55,admin,admin
80,159029,7529,26734,794,0,0,N,N,N,CP_Drtn,TT_Mile,DT_FixedDrtn,RV_OK,TK_NotStart,A-6,Advanced payment,,8,0,0,0,0,0,0,0,0,0,,,,2012-10-02 08:00,2012-10-02 08:00,,2012-10-01 08:00,2012-10-01 08:00,2012-10-01 08:00,2012-10-01 08:00,2012-10-01 08:00,2012-10-01 08:00,,2012-10-02 08:00,2012-10-02 08:00,,PT_Normal,,,,,+8Q5tIeM4ka46gpH8w9Bag,koU0wyp0jkG0s+iM3nqn8w,,,Y,0,0,,,2012-09-26 13:22,2012-10-03 16:55,admin,admin
81,159030,7529,26734,794,0,0,N,N,N,CP_Drtn,TT_Mile,DT_FixedDrtn,RV_OK,TK_NotStart,A-7,Commencement date,,8,0,0,0,0,0,0,0,0,0,,,,2012-10-02 08:00,2012-10-02 08:00,,2012-10-01 08:00,2012-10-01 08:00,2012-10-01 08:00,2012-10-01 08:00,2012-10-01 08:00,2012-10-01 08:00,,2012-10-02 08:00,2012-10-02 08:00,,PT_Normal,,,,,6zIlOIRkS0av92yxABvdJw,BcmhSKq+Lk6pGy3GRA0xGw,,,Y,0,0,,,2012-09-26 13:22,2012-10-03 16:55,admin,admin
82,159031,7529,26734,794,0,0,N,N,N,CP_Drtn,TT_FinMile,DT_FixedDrtn,RV_OK,TK_NotStart,A-140,Project handing over,,24,0,0,0,0,0,0,0,0,0,,,,2013-09-30 17:00,2013-09-30 17:00,,2013-09-27 17:00,2013-09-27 17:00,2013-09-27 17:00,2013-09-27 17:00,2013-09-27 17:00,2013-09-27 17:00,,2013-09-30 17:00,2013-09-30 17:00,,PT_Normal,,,,,wK/vz32u7EupDSNPbjcZmA,onX7gpfp/k6XSpnuC3694A,,,N,0,0,,,2012-09-26 13:22,2012-10-03 16:20,admin,admin
83,159032,7529,26753,794,1,0,N,N,N,CP_Drtn,TT_Task,DT_FixedDUR2,RV_OK,TK_NotStart,A-137,Dry mix painting,,24,0,160,0,0,0,160,0,0,0,,,,2013-09-11 08:00,2013-09-30 17:00,,2013-09-08 08:00,2013-09-27 17:00,2013-09-08 08:00,2013-09-27 17:00,2013-09-08 08:00,2013-09-27 17:00,,2013-09-11 08:00,2013-09-30 17:00,,PT_Normal,,,,,i6h42ZDKak67WdBvNdmwpg,,,,N,0,0,,,2012-09-26 14:49,2012-10-03 16:20,admin,admin
84,159033,7529,26753,794,1,0,N,N,N,CP_Drtn,TT_Task,DT_FixedDUR2,RV_OK,TK_NotStart,A-131,External Plaster works,,24,0,240,0,0,0,240,0,0,0,,,,2013-08-12 08:00,2013-09-10 17:00,,2013-08-09 08:00,2013-09-07 17:00,2013-08-09 08:00,2013-09-07 17:00,2013-08-09 08:00,2013-09-07 17:00,,2013-08-12 08:00,2013-09-10 17:00,,PT_Normal,,,,,lG7LVZg6skeCMtlCYljtrQ,,,,N,0,0,,,2012-09-26 14:50,2012-10-03 16:20,admin,admin
85,159045,7529,26751,794,1,0,N,N,N,CP_Drtn,TT_Task,DT_FixedDUR2,RV_OK,TK_NotStart,A-138,Plumbing works,,24,16,160,0,0,0,160,0,0,0,,,,2013-09-11 08:00,2013-09-30 17:00,,2013-09-08 08:00,2013-09-27 17:00,2013-09-08 08:00,2013-09-27 17:00,2013-09-08 08:00,2013-09-27 17:00,,2013-09-11 08:00,2013-09-30 17:00,,PT_Normal,,,,,uIl9qD2LK0KYHr3XSTl92w,,,,N,0,0,,,2012-09-26 16:24,2012-10-03 16:55,NotPrmUser,admin
86,159055,7529,26763,794,1,0,N,N,N,CP_Drtn,TT_Task,DT_FixedDUR2,RV_OK,TK_NotStart,A-16,Excavation,,32,0,80,0,0,0,80,0,0,0,,,,2012-10-10 08:00,2012-10-19 17:00,,2012-10-06 08:00,2012-10-15 17:00,2012-10-06 08:00,2012-10-15 17:00,2012-10-06 08:00,2012-10-15 17:00,,2012-10-10 08:00,2012-10-19 17:00,,PT_Normal,,,,,pmSWWTeebUOgfPk0iLY5fg,o0Fmjg9q8EOoIJSavwcTeQ,,,N,0,0,,,2012-09-27 10:57,2012-10-03 16:55,admin,admin
87,159056,7529,26763,794,1,0,N,N,N,CP_Drtn,TT_Task,DT_FixedDUR2,RV_OK,TK_NotStart,A-21,Plain Concrete footings,,224,0,112,0,0,0,112,0,0,0,,,,2012-11-20 08:00,2012-12-03 17:00,,2012-10-23 08:00,2012-11-05 17:00,2012-10-23 08:00,2012-11-05 17:00,2012-10-23 08:00,2012-11-05 17:00,,2012-11-20 08:00,2012-12-03 17:00,,PT_Normal,,,,,0KMp/qWH+EGHyOcl3fhSIA,6n/3oezL1Uaiya8yf+LXIQ,,,N,0,0,,,2012-09-27 10:57,2012-10-03 17:06,admin,admin
88,159057,7529,26763,794,1,0,N,N,N,CP_Drtn,TT_Task,DT_FixedDUR2,RV_OK,TK_NotStart,A-27,R.C. footings & tie beams,,224,0,120,0,0,0,120,0,0,0,,,,2012-12-04 08:00,2012-12-18 17:00,,2012-11-06 08:00,2012-11-20 17:00,2012-11-06 08:00,2012-11-20 17:00,2012-11-06 08:00,2012-11-20 17:00,,2012-12-04 08:00,2012-12-18 17:00,,PT_Normal,,,,,PCjIhjgv1kKVeBf5LXvqNw,dCW7+ADHEkK38DdSCjkgAg,,,N,0,0,,,2012-09-27 10:57,2012-10-03 17:06,admin,admin
89,159058,7529,26763,794,1,0,N,N,N,CP_Drtn,TT_Task,DT_FixedDUR2,RV_OK,TK_NotStart,A-46,Bituminous waterproofing for foundations,,440,0,56,0,0,0,56,0,0,0,,,,2013-02-02 08:00,2013-02-08 17:00,,2012-12-09 08:00,2012-12-15 17:00,2012-12-09 08:00,2012-12-15 17:00,2012-12-09 08:00,2012-12-15 17:00,,2013-02-02 08:00,2013-02-08 17:00,,PT_Normal,,,,,MYhqKWCMQ0aScmvNlUmggg,b3B8oRN79E2pjcJvLkvzAw,,,N,0,0,,,2012-09-27 10:57,2012-10-03 16:55,admin,admin
90,159059,7529,26763,794,1,0,N,N,N,CP_Drtn,TT_Task,DT_FixedDUR2,RV_OK,TK_NotStart,A-36,RC for pedestals,,440,0,112,0,0,0,112,0,0,0,,,,2013-01-15 08:00,2013-01-28 17:00,,2012-11-21 08:00,2012-12-04 17:00,2012-11-21 08:00,2012-12-04 17:00,2012-11-21 08:00,2012-12-04 17:00,,2013-01-15 08:00,2013-01-28 17:00,,PT_Normal,,,,,gfk8mPksgkSkeR+a7our+A,hKy/ZETTmUSDXWkXqTW+zA,,,N,0,0,,,2012-09-27 10:57,2012-10-03 16:55,admin,admin
91,159060,7529,26763,794,1,0,N,N,N,CP_Drtn,TT_Task,DT_FixedDUR2,RV_OK,TK_NotStart,A-37,Anchors for steel structure(by others),,440,0,112,0,0,0,112,0,0,0,,,,2013-01-15 08:00,2013-01-28 17:00,,2012-11-21 08:00,2012-12-04 17:00,2012-11-21 08:00,2012-12-04 17:00,2012-11-21 08:00,2012-12-04 17:00,,2013-01-15 08:00,2013-01-28 17:00,,PT_Normal,,,,,HO41UIi6zUmiyMvMhGHksQ,PQZjkwmof06FrKjerc6HnQ,,,N,0,0,,,2012-09-27 10:57,2012-10-03 16:55,admin,admin
92,159061,7529,26763,794,1,0,N,N,N,CP_Drtn,TT_Task,DT_FixedDUR2,RV_OK,TK_NotStart,A-50,Backfilling Between foundations,,440,0,56,0,0,0,56,0,0,0,,,,2013-02-09 08:00,2013-02-15 17:00,,2012-12-16 08:00,2012-12-22 17:00,2012-12-16 08:00,2012-12-22 17:00,2012-12-16 08:00,2012-12-22 17:00,,2013-02-09 08:00,2013-02-15 17:00,,PT_Normal,,,,,9tWofz2Cs0maFTJpuRdyBg,OOD/ZCxLRUWE2Fp7pMbPWw,,,N,0,0,,,2012-09-27 10:57,2012-10-03 16:55,admin,admin
93,159062,7529,26763,794,1,0,N,N,N,CP_Drtn,TT_Task,DT_FixedDUR2,RV_OK,TK_NotStart,A-18,Replacement under fottings,,32,0,56,0,0,0,56,0,0,0,,,,2012-10-20 08:00,2012-10-26 17:00,,2012-10-16 08:00,2012-10-22 17:00,2012-10-16 08:00,2012-10-22 17:00,2012-10-16 08:00,2012-10-22 17:00,,2012-10-20 08:00,2012-10-26 17:00,,PT_Normal,,,,,0BrXKLCa8Uu63iBTSjh+FA,yVIwegWL8U+JeV4WuQxTZQ,,,N,0,0,,,2012-09-27 10:57,2012-10-03 16:55,admin,admin
94,159063,7529,26763,794,1,0,N,N,N,CP_Drtn,TT_Task,DT_FixedDUR2,RV_OK,TK_NotStart,A-41,Masonry works between pedestals,,440,0,112,0,0,0,112,0,0,0,,,,2013-01-19 08:00,2013-02-01 17:00,,2012-11-25 08:00,2012-12-08 17:00,2012-11-25 08:00,2012-12-08 17:00,2012-11-25 08:00,2012-12-08 17:00,,2013-01-19 08:00,2013-02-01 17:00,,PT_Normal,,,,,duRW8lZ5H0efv5KGwpbjdg,56+X+3VwtU2G6rDrtwWMZA,,,N,0,0,,,2012-09-27 10:57,2012-10-03 16:55,admin,admin
95,159064,7529,26763,794,1,0,N,N,N,CP_Drtn,TT_Task,DT_FixedDUR2,RV_OK,TK_NotStart,A-38,R.C walls,,448,8,160,0,0,0,160,0,0,0,,,,2013-01-16 08:00,2013-02-04 17:00,,2012-11-21 08:00,2012-12-10 17:00,2012-11-21 08:00,2012-12-10 17:00,2012-11-21 08:00,2012-12-10 17:00,,2013-01-16 08:00,2013-02-04 17:00,,PT_Normal,,,,,0rbtJtyPE02Lm29Gol4NDQ,senskhX0+0ehQ/adtDb+Jw,,,N,0,0,,,2012-09-27 10:57,2012-10-03 16:55,admin,admin
96,159085,7529,26764,794,1,0,N,N,N,CP_Drtn,TT_Task,DT_FixedDUR2,RV_OK,TK_NotStart,A-22,Excavation,,32,0,160,0,0,0,160,0,0,0,,,,2012-10-27 08:00,2012-11-15 17:00,,2012-10-23 08:00,2012-11-11 17:00,2012-10-23 08:00,2012-11-11 17:00,2012-10-23 08:00,2012-11-11 17:00,,2012-10-27 08:00,2012-11-15 17:00,,PT_Normal,,,,,Q4wXvnqa+UCTpLa8fybUsQ,pmSWWTeebUOgfPk0iLY5fg,,,N,0,0,,,2012-09-27 11:15,2012-10-03 16:55,admin,admin
97,159086,7529,26764,794,1,0,N,N,N,CP_Drtn,TT_Task,DT_FixedDUR2,RV_OK,TK_NotStart,A-28,Plain Concrete footings,,128,0,112,0,0,0,112,0,0,0,,,,2012-12-05 08:00,2012-12-18 17:00,,2012-11-19 08:00,2012-12-02 17:00,2012-11-19 08:00,2012-12-02 17:00,2012-11-19 08:00,2012-12-02 17:00,,2012-12-05 08:00,2012-12-18 17:00,,PT_Normal,,,,,FGNE6GDz3keLQphRhZ6GKQ,0KMp/qWH+EGHyOcl3fhSIA,,,N,0,0,,,2012-09-27 11:15,2012-10-03 17:05,admin,admin
98,159087,7529,26764,794,1,0,N,N,N,CP_Drtn,TT_Task,DT_FixedDUR2,RV_OK,TK_NotStart,A-39,R.C. footings & tie beams,,128,0,120,0,0,0,120,0,0,0,,,,2012-12-19 08:00,2013-01-02 17:00,,2012-12-03 08:00,2012-12-17 17:00,2012-12-03 08:00,2012-12-17 17:00,2012-12-03 08:00,2012-12-17 17:00,,2012-12-19 08:00,2013-01-02 17:00,,PT_Normal,,,,,8L+fEC2Ys0ay+tA6jUDHvw,PCjIhjgv1kKVeBf5LXvqNw,,,N,0,0,,,2012-09-27 11:15,2012-10-03 17:05,admin,admin
99,159088,7529,26764,794,1,0,N,N,N,CP_Drtn,TT_Task,DT_FixedDUR2,RV_OK,TK_NotStart,A-55,Bituminous waterproofing for foundations,,384,0,56,0,0,0,56,0,0,0,,,,2013-02-22 08:00,2013-02-28 17:00,,2013-01-05 08:00,2013-01-11 17:00,2013-01-05 08:00,2013-01-11 17:00,2013-01-05 08:00,2013-01-11 17:00,,2013-02-22 08:00,2013-02-28 17:00,,PT_Normal,,,,,msDGxWUp00uycj03EQJarw,MYhqKWCMQ0aScmvNlUmggg,,,N,0,0,,,2012-09-27 11:15,2012-10-03 16:55,admin,admin
100,159089,7529,26764,794,1,0,N,N,N,CP_Drtn,TT_Task,DT_FixedDUR2,RV_OK,TK_NotStart,A-43,RC for pedestals,,384,0,112,0,0,0,112,0,0,0,,,,2013-02-04 08:00,2013-02-17 17:00,,2012-12-18 08:00,2012-12-31 17:00,2012-12-18 08:00,2012-12-31 17:00,2012-12-18 08:00,2012-12-31 17:00,,2013-02-04 08:00,2013-02-17 17:00,,PT_Normal,,,,,mDvcDVCmzk6KVUk2rcDoAw,gfk8mPksgkSkeR+a7our+A,,,N,0,0,,,2012-09-27 11:15,2012-10-03 16:55,admin,admin
101,159090,7529,26764,794,1,0,N,N,N,CP_Drtn,TT_Task,DT_FixedDUR2,RV_OK,TK_NotStart,A-44,Anchors for steel structure(by others),,384,0,112,0,0,0,112,0,0,0,,,,2013-02-04 08:00,2013-02-17 17:00,,2012-12-18 08:00,2012-12-31 17:00,2012-12-18 08:00,2012-12-31 17:00,2012-12-18 08:00,2012-12-31 17:00,,2013-02-04 08:00,2013-02-17 17:00,,PT_Normal,,,,,bb46JeR3W06SgjWIRJBNjw,HO41UIi6zUmiyMvMhGHksQ,,,N,0,0,,,2012-09-27 11:15,2012-10-03 16:55,admin,admin
102,159091,7529,26764,794,1,0,N,N,N,CP_Drtn,TT_Task,DT_FixedDUR2,RV_OK,TK_NotStart,A-56,Backfilling Between foundations,,384,0,56,0,0,0,56,0,0,0,,,,2013-03-01 08:00,2013-03-07 17:00,,2013-01-12 08:00,2013-01-18 17:00,2013-01-12 08:00,2013-01-18 17:00,2013-01-12 08:00,2013-01-18 17:00,,2013-03-01 08:00,2013-03-07 17:00,,PT_Normal,,,,,k/PQGmkLlEKaiL0QrW/Tbg,9tWofz2Cs0maFTJpuRdyBg,,,N,0,0,,,2012-09-27 11:15,2012-10-03 16:55,admin,admin
103,159092,7529,26764,794,1,0,N,N,N,CP_Drtn,TT_Task,DT_FixedDUR2,RV_OK,TK_NotStart,A-26,Replacement under fottings,,32,0,56,0,0,0,56,0,0,0,,,,2012-11-16 08:00,2012-11-22 17:00,,2012-11-12 08:00,2012-11-18 17:00,2012-11-12 08:00,2012-11-18 17:00,2012-11-12 08:00,2012-11-18 17:00,,2012-11-16 08:00,2012-11-22 17:00,,PT_Normal,,,,,5ScR60sZ1kq21Dhc+XDd3Q,0BrXKLCa8Uu63iBTSjh+FA,,,N,0,0,,,2012-09-27 11:15,2012-10-03 16:55,admin,admin
104,159093,7529,26764,794,1,0,N,N,N,CP_Drtn,TT_Task,DT_FixedDUR2,RV_OK,TK_NotStart,A-47,Masonry works between pedestals,,384,0,112,0,0,0,112,0,0,0,,,,2013-02-08 08:00,2013-02-21 17:00,,2012-12-22 08:00,2013-01-04 17:00,2012-12-22 08:00,2013-01-04 17:00,2012-12-22 08:00,2013-01-04 17:00,,2013-02-08 08:00,2013-02-21 17:00,,PT_Normal,,,,,6V30nNrgRUGXCR8jwcnZeA,duRW8lZ5H0efv5KGwpbjdg,,,N,0,0,,,2012-09-27 11:15,2012-10-03 16:55,admin,admin
105,159094,7529,26764,794,1,0,N,N,N,CP_Drtn,TT_Task,DT_FixedDUR2,RV_OK,TK_NotStart,A-45,R.C walls,,392,8,160,0,0,0,160,0,0,0,,,,2013-02-05 08:00,2013-02-24 17:00,,2012-12-18 08:00,2013-01-06 17:00,2012-12-18 08:00,2013-01-06 17:00,2012-12-18 08:00,2013-01-06 17:00,,2013-02-05 08:00,2013-02-24 17:00,,PT_Normal,,,,,I6cHD23hgUS1zvyPykXQlA,0rbtJtyPE02Lm29Gol4NDQ,,,N,0,0,,,2012-09-27 11:15,2012-10-03 16:55,admin,admin
106,159095,7529,26765,794,1,0,N,N,N,CP_Drtn,TT_Task,DT_FixedDUR2,RV_OK,TK_NotStart,A-29,Excavation,,32,0,112,0,0,0,112,0,0,0,,,,2012-11-23 08:00,2012-12-06 17:00,,2012-11-19 08:00,2012-12-02 17:00,2012-11-19 08:00,2012-12-02 17:00,2012-11-19 08:00,2012-12-02 17:00,,2012-11-23 08:00,2012-12-06 17:00,,PT_Normal,,,,,+l4+s46MW0yge58ofdHbTQ,pmSWWTeebUOgfPk0iLY5fg,,,N,0,0,,,2012-09-27 11:15,2012-10-03 16:55,admin,admin
107,159096,7529,26765,794,1,0,N,N,N,CP_Drtn,TT_Task,DT_FixedDUR2,RV_OK,TK_NotStart,A-42,Plain Concrete footings,,32,0,160,0,0,0,160,0,0,0,,,,2012-12-14 08:00,2013-01-02 17:00,,2012-12-10 08:00,2012-12-29 17:00,2012-12-10 08:00,2012-12-29 17:00,2012-12-10 08:00,2012-12-29 17:00,,2012-12-14 08:00,2013-01-02 17:00,,PT_Normal,,,,,qkQ9L/dipUyQn35amgexNA,0KMp/qWH+EGHyOcl3fhSIA,,,N,0,0,,,2012-09-27 11:15,2012-10-03 17:06,admin,admin
108,159097,7529,26765,794,1,0,N,N,N,CP_Drtn,TT_Task,DT_FixedDUR2,RV_OK,TK_NotStart,A-52,R.C. footings & tie beams,,32,0,200,0,0,0,200,0,0,0,,,,2013-01-03 08:00,2013-01-27 17:00,,2012-12-30 08:00,2013-01-23 17:00,2012-12-30 08:00,2013-01-23 17:00,2012-12-30 08:00,2013-01-23 17:00,,2013-01-03 08:00,2013-01-27 17:00,,PT_Normal,,,,,usRUm9oEbUK8OZbczwespQ,PCjIhjgv1kKVeBf5LXvqNw,,,N,0,0,,,2012-09-27 11:15,2012-10-03 17:06,admin,admin
109,159098,7529,26765,794,1,0,N,N,N,CP_Drtn,TT_Task,DT_FixedDUR2,RV_OK,TK_NotStart,A-79,Bituminous waterproofing for foundations,,32,0,80,0,0,0,80,0,0,0,,,,2013-02-26 08:00,2013-03-07 17:00,,2013-02-22 08:00,2013-03-03 17:00,2013-02-22 08:00,2013-03-03 17:00,2013-02-22 08:00,2013-03-03 17:00,,2013-02-26 08:00,2013-03-07 17:00,,PT_Normal,,,,,HD9H/JSlf0m3HAlhvJ59SA,MYhqKWCMQ0aScmvNlUmggg,,,N,0,0,,,2012-09-27 11:15,2012-10-03 16:55,admin,admin
110,159099,7529,26765,794,1,0,N,N,N,CP_Drtn,TT_Task,DT_FixedDUR2,RV_OK,TK_NotStart,A-59,RC for pedestals,,32,0,200,0,0,0,200,0,0,0,,,,2013-01-28 08:00,2013-02-21 17:00,,2013-01-24 08:00,2013-02-17 17:00,2013-01-24 08:00,2013-02-17 17:00,2013-01-24 08:00,2013-02-17 17:00,,2013-01-28 08:00,2013-02-21 17:00,,PT_Normal,,,,,DYeDq22d2E+h0nOB3x3/jw,gfk8mPksgkSkeR+a7our+A,,,N,0,0,,,2012-09-27 11:15,2012-10-03 16:55,admin,admin
111,159100,7529,26765,794,1,0,N,N,N,CP_Drtn,TT_Task,DT_FixedDUR2,RV_OK,TK_NotStart,A-60,Anchors for steel structure(by others),,32,0,200,0,0,0,200,0,0,0,,,,2013-01-28 08:00,2013-02-21 17:00,,2013-01-24 08:00,2013-02-17 17:00,2013-01-24 08:00,2013-02-17 17:00,2013-01-24 08:00,2013-02-17 17:00,,2013-01-28 08:00,2013-02-21 17:00,,PT_Normal,,,,,HIO1lSdacUCX5+hVxs/vgQ,HO41UIi6zUmiyMvMhGHksQ,,,N,0,0,,,2012-09-27 11:15,2012-10-03 16:55,admin,admin
112,159101,7529,26765,794,1,0,N,N,N,CP_Drtn,TT_Task,DT_FixedDUR2,RV_OK,TK_NotStart,A-84,Backfilling Between foundations,,32,0,80,0,0,0,80,0,0,0,,,,2013-03-08 08:00,2013-03-17 17:00,,2013-03-04 08:00,2013-03-13 17:00,2013-03-04 08:00,2013-03-13 17:00,2013-03-04 08:00,2013-03-13 17:00,,2013-03-08 08:00,2013-03-17 17:00,,PT_Normal,,,,,0w6CkfCP50eyhdnJBotlyA,9tWofz2Cs0maFTJpuRdyBg,,,N,0,0,,,2012-09-27 11:15,2012-10-03 16:55,admin,admin
113,159102,7529,26765,794,1,0,N,N,N,CP_Drtn,TT_Task,DT_FixedDUR2,RV_OK,TK_NotStart,A-34,Replacement under fottings,,32,0,56,0,0,0,56,0,0,0,,,,2012-12-07 08:00,2012-12-13 17:00,,2012-12-03 08:00,2012-12-09 17:00,2012-12-03 08:00,2012-12-09 17:00,2012-12-03 08:00,2012-12-09 17:00,,2012-12-07 08:00,2012-12-13 17:00,,PT_Normal,,,,,/glkStXTy0SZuIG9poWa+g,0BrXKLCa8Uu63iBTSjh+FA,,,N,0,0,,,2012-09-27 11:15,2012-10-03 16:55,admin,admin
114,159103,7529,26765,794,1,0,N,N,N,CP_Drtn,TT_Task,DT_FixedDUR2,RV_OK,TK_NotStart,A-72,Masonry works between pedestals,,32,0,112,0,0,0,112,0,0,0,,,,2013-02-12 08:00,2013-02-25 17:00,,2013-02-08 08:00,2013-02-21 17:00,2013-02-08 08:00,2013-02-21 17:00,2013-02-08 08:00,2013-02-21 17:00,,2013-02-12 08:00,2013-02-25 17:00,,PT_Normal,,,,,DkdWFmP7Qkefsof8pkDK6A,duRW8lZ5H0efv5KGwpbjdg,,,N,0,0,,,2012-09-27 11:15,2012-10-03 16:55,admin,admin
115,159104,7529,26765,794,1,0,N,N,N,CP_Drtn,TT_Task,DT_FixedDUR2,RV_OK,TK_NotStart,A-61,R.C walls,,128,96,160,0,0,0,160,0,0,0,,,,2013-02-09 08:00,2013-02-28 17:00,,2013-01-24 08:00,2013-02-12 17:00,2013-01-24 08:00,2013-02-12 17:00,2013-01-24 08:00,2013-02-12 17:00,,2013-02-09 08:00,2013-02-28 17:00,,PT_Normal,,,,,li8pH2yl/EiGiO7We5zBhw,0rbtJtyPE02Lm29Gol4NDQ,,,N,0,0,,,2012-09-27 11:15,2012-10-03 16:55,admin,admin
116,159105,7529,26765,794,1,0,N,N,N,CP_Drtn,TT_Task,DT_FixedDUR2,RV_OK,TK_NotStart,A-86,Steel structure erection (BY OTHERS),,32,0,160,0,0,0,160,0,0,0,,,,2013-03-18 08:00,2013-04-06 17:00,,2013-03-14 08:00,2013-04-02 17:00,2013-03-14 08:00,2013-04-02 17:00,2013-03-14 08:00,2013-04-02 17:00,,2013-03-18 08:00,2013-04-06 17:00,,PT_Normal,,,,,bHhJnNyPOEiKHRSJr95YxA,,,,N,0,0,,,2012-09-27 13:00,2012-10-03 16:55,admin,admin
117,159106,7529,26764,794,1,0,N,N,N,CP_Drtn,TT_Task,DT_FixedDUR2,RV_OK,TK_NotStart,A-62,Steel structure erection (BY OTHERS),,384,0,80,0,0,0,80,0,0,0,,,,2013-03-08 08:00,2013-03-17 17:00,,2013-01-19 08:00,2013-01-28 17:00,2013-01-19 08:00,2013-01-28 17:00,2013-01-19 08:00,2013-01-28 17:00,,2013-03-08 08:00,2013-03-17 17:00,,PT_Normal,,,,,r/WXZF2+/U6O3QqtJ3zk+w,bHhJnNyPOEiKHRSJr95YxA,,,N,0,0,,,2012-09-27 13:01,2012-10-03 16:55,admin,admin
118,159107,7529,26763,794,1,0,N,N,N,CP_Drtn,TT_Task,DT_FixedDUR2,RV_OK,TK_NotStart,A-54,Steel structure erection (BY OTHERS),,440,0,160,0,0,0,160,0,0,0,,,,2013-02-16 08:00,2013-03-07 17:00,,2012-12-23 08:00,2013-01-11 17:00,2012-12-23 08:00,2013-01-11 17:00,2012-12-23 08:00,2013-01-11 17:00,,2013-02-16 08:00,2013-03-07 17:00,,PT_Normal,,,,,7joSIsyCVkCibgDEV+cXOg,bHhJnNyPOEiKHRSJr95YxA,,,N,0,0,,,2012-09-27 13:01,2012-10-03 16:55,admin,admin
119,159108,7529,26763,794,1,0,N,N,N,CP_Drtn,TT_Task,DT_FixedDUR2,RV_OK,TK_NotStart,A-74,P.C Slab on grade,,1048,0,56,0,0,0,56,0,0,0,,,,2013-06-12 08:00,2013-06-18 17:00,,2013-02-01 08:00,2013-02-07 17:00,2013-02-01 08:00,2013-02-07 17:00,2013-02-01 08:00,2013-02-07 17:00,,2013-06-12 08:00,2013-06-18 17:00,,PT_Normal,,,,,BagCC9X05EWTTxbILLU6JQ,,,,N,0,0,,,2012-09-27 13:02,2012-10-04 10:57,admin,admin
120,159109,7529,26763,794,1,0,N,N,N,CP_Drtn,TT_Task,DT_FixedDUR2,RV_OK,TK_NotStart,A-78,R.C slab on grade,,1048,0,112,0,0,0,112,0,0,0,,,,2013-06-19 08:00,2013-07-02 17:00,,2013-02-08 08:00,2013-02-21 17:00,2013-02-08 08:00,2013-02-21 17:00,2013-02-08 08:00,2013-02-21 17:00,,2013-06-19 08:00,2013-07-02 17:00,,PT_Normal,,,,,YELyDD0hH0SVHk/axamI6A,,,,N,0,0,,,2012-09-27 13:03,2012-10-04 10:57,admin,admin
121,159110,7529,26764,794,1,0,N,N,N,CP_Drtn,TT_Task,DT_FixedDUR2,RV_OK,TK_NotStart,A-80,P.C Slab on grade,,712,0,56,0,0,0,56,0,0,0,,,,2013-05-18 08:00,2013-05-24 17:00,,2013-02-18 08:00,2013-02-24 17:00,2013-02-18 08:00,2013-02-24 17:00,2013-02-18 08:00,2013-02-24 17:00,,2013-05-18 08:00,2013-05-24 17:00,,PT_Normal,,,,,9v3MV0Ou70eMAnHCsIly3g,BagCC9X05EWTTxbILLU6JQ,,,N,0,0,,,2012-09-27 13:04,2012-10-03 16:55,admin,admin
122,159111,7529,26764,794,1,0,N,N,N,CP_Drtn,TT_Task,DT_FixedDUR2,RV_OK,TK_NotStart,A-82,R.C slab on grade,,712,0,112,0,0,0,112,0,0,0,,,,2013-05-25 08:00,2013-06-07 17:00,,2013-02-25 08:00,2013-03-10 17:00,2013-02-25 08:00,2013-03-10 17:00,2013-02-25 08:00,2013-03-10 17:00,,2013-05-25 08:00,2013-06-07 17:00,,PT_Normal,,,,,HnEhUdgebU2RA2tA57kSFQ,YELyDD0hH0SVHk/axamI6A,,,N,0,0,,,2012-09-27 13:04,2012-10-03 16:55,admin,admin
123,159112,7529,26765,794,1,0,N,N,N,CP_Drtn,TT_Task,DT_FixedDUR2,RV_OK,TK_NotStart,A-103,P.C Slab on grade,,32,0,80,0,0,0,80,0,0,0,,,,2013-05-05 08:00,2013-05-14 17:00,,2013-05-01 08:00,2013-05-10 17:00,2013-05-01 08:00,2013-05-10 17:00,2013-05-01 08:00,2013-05-10 17:00,,2013-05-05 08:00,2013-05-14 17:00,,PT_Normal,,,,,u7vnvVrn/kicVUfLG7/tQw,BagCC9X05EWTTxbILLU6JQ,,,N,0,0,,,2012-09-27 13:04,2012-10-03 16:55,admin,admin
124,159113,7529,26765,794,1,0,N,N,N,CP_Drtn,TT_Task,DT_FixedDUR2,RV_OK,TK_NotStart,A-104,R.C slab on grade,,32,0,192,0,0,0,192,0,0,0,,,,2013-05-15 08:00,2013-06-07 17:00,,2013-05-11 08:00,2013-06-03 17:00,2013-05-11 08:00,2013-06-03 17:00,2013-05-11 08:00,2013-06-03 17:00,,2013-05-15 08:00,2013-06-07 17:00,,PT_Normal,,,,,hTOR/ug9mEqca6h6rPWm9A,YELyDD0hH0SVHk/axamI6A,,,N,0,0,,,2012-09-27 13:04,2012-10-03 16:55,admin,admin
125,159116,7529,26765,794,1,0,N,N,N,CP_Drtn,TT_Task,DT_FixedDUR2,RV_OK,TK_NotStart,A-110,Epoxy Flooring on S.O.G zones(1&2&3),,32,24,200,0,0,0,200,0,0,0,,,,2013-09-06 08:00,2013-09-30 17:00,,2013-09-02 08:00,2013-09-26 17:00,2013-09-02 08:00,2013-09-26 17:00,2013-09-02 08:00,2013-09-26 17:00,,2013-09-06 08:00,2013-09-30 17:00,,PT_Normal,,,,,e8OnsopeSkOfMe1cziEfSg,zCSt20UQdESkEQHgDgHYLg,,,N,0,0,,,2012-09-27 13:17,2012-10-03 16:55,admin,admin
126,159117,7529,26763,794,1,0,N,N,N,CP_Drtn,TT_Task,DT_FixedDUR2,RV_OK,TK_NotStart,A-63,Erection of roofing works(by others),,1048,0,80,0,0,0,80,0,0,0,,,,2013-05-23 08:00,2013-06-01 17:00,,2013-01-12 08:00,2013-01-21 17:00,2013-01-12 08:00,2013-01-21 17:00,2013-01-12 08:00,2013-01-21 17:00,,2013-05-23 08:00,2013-06-01 17:00,,PT_Normal,,,,,FcpU+Cn+ek6+6h29nv/FMQ,,,,N,0,0,,,2012-09-27 13:35,2012-10-04 10:57,admin,admin
127,159118,7529,26763,794,1,0,N,N,N,CP_Drtn,TT_Task,DT_FixedDUR2,RV_OK,TK_NotStart,A-67,Erection of walls linear sheeting(by others),,1048,0,80,0,0,0,80,0,0,0,,,,2013-06-02 08:00,2013-06-11 17:00,,2013-01-22 08:00,2013-01-31 17:00,2013-01-22 08:00,2013-01-31 17:00,2013-01-22 08:00,2013-01-31 17:00,,2013-06-02 08:00,2013-06-11 17:00,,PT_Normal,,,,,5vT1Pb35BE+H1B52mU0C4A,,,,N,0,0,,,2012-09-27 13:35,2012-10-04 10:57,admin,admin
128,159119,7529,26764,794,1,0,N,N,N,CP_Drtn,TT_Task,DT_FixedDUR2,RV_OK,TK_NotStart,A-68,Erection of roofing works(by others),,712,0,80,0,0,0,80,0,0,0,,,,2013-04-28 08:00,2013-05-07 17:00,,2013-01-29 08:00,2013-02-07 17:00,2013-01-29 08:00,2013-02-07 17:00,2013-01-29 08:00,2013-02-07 17:00,,2013-04-28 08:00,2013-05-07 17:00,,PT_Normal,,,,,uAoOHb+YN02yCEZuy4eMqw,FcpU+Cn+ek6+6h29nv/FMQ,,,N,0,0,,,2012-09-27 13:37,2012-10-03 16:55,admin,admin
129,159120,7529,26764,794,1,0,N,N,N,CP_Drtn,TT_Task,DT_FixedDUR2,RV_OK,TK_NotStart,A-75,Erection of walls linear sheeting(by others),,712,0,80,0,0,0,80,0,0,0,,,,2013-05-08 08:00,2013-05-17 17:00,,2013-02-08 08:00,2013-02-17 17:00,2013-02-08 08:00,2013-02-17 17:00,2013-02-08 08:00,2013-02-17 17:00,,2013-05-08 08:00,2013-05-17 17:00,,PT_Normal,,,,,U8oM+2gs5k+MTqpCAJuY0w,5vT1Pb35BE+H1B52mU0C4A,,,N,0,0,,,2012-09-27 13:37,2012-10-03 16:55,admin,admin
130,159121,7529,26765,794,1,0,N,N,N,CP_Drtn,TT_Task,DT_FixedDUR2,RV_OK,TK_NotStart,A-93,Erection of roofing works(by others),,32,0,112,0,0,0,112,0,0,0,,,,2013-04-07 08:00,2013-04-20 17:00,,2013-04-03 08:00,2013-04-16 17:00,2013-04-03 08:00,2013-04-16 17:00,2013-04-03 08:00,2013-04-16 17:00,,2013-04-07 08:00,2013-04-20 17:00,,PT_Normal,,,,,gT3VlweirUubkpnzHhK9jw,FcpU+Cn+ek6+6h29nv/FMQ,,,N,0,0,,,2012-09-27 13:37,2012-10-03 16:55,admin,admin
131,159122,7529,26765,794,1,0,N,N,N,CP_Drtn,TT_Task,DT_FixedDUR2,RV_OK,TK_NotStart,A-99,Erection of walls linear sheeting(by others),,32,0,112,0,0,0,112,0,0,0,,,,2013-04-21 08:00,2013-05-04 17:00,,2013-04-17 08:00,2013-04-30 17:00,2013-04-17 08:00,2013-04-30 17:00,2013-04-17 08:00,2013-04-30 17:00,,2013-04-21 08:00,2013-05-04 17:00,,PT_Normal,,,,,93eVd9sAyUeMHL182+jm9Q,5vT1Pb35BE+H1B52mU0C4A,,,N,0,0,,,2012-09-27 13:37,2012-10-03 16:55,admin,admin
132,159123,7529,26759,794,1,0,N,N,N,CP_Drtn,TT_Task,DT_FixedDUR2,RV_OK,TK_NotStart,A1000,Mechanical works,,312,304,720,0,0,0,720,0,0,0,,,,2013-07-03 08:00,2013-09-30 17:00,,2013-05-25 08:00,2013-08-22 17:00,2013-05-25 08:00,2013-08-22 17:00,2013-05-25 08:00,2013-08-22 17:00,,2013-07-03 08:00,2013-09-30 17:00,,PT_Normal,,,,,uKqO/DBnFUy339EDmUMnIg,,,,N,0,0,,,2012-09-27 17:04,2012-10-03 16:55,admin,admin
133,159124,7529,26759,794,1,0,N,N,N,CP_Drtn,TT_Task,DT_FixedDUR2,RV_OK,TK_NotStart,A1010,Electrical works,,512,504,720,0,0,0,720,0,0,0,,,,2013-07-03 08:00,2013-09-30 17:00,,2013-04-30 08:00,2013-07-28 17:00,2013-04-30 08:00,2013-07-28 17:00,2013-04-30 08:00,2013-07-28 17:00,,2013-07-03 08:00,2013-09-30 17:00,,PT_Normal,,,,,2ynxIn73+U2E2ZWTIUVS4A,,,,N,0,0,,,2012-09-27 17:04,2012-10-03 16:55,admin,admin
134,159125,7529,26766,794,1,0,N,N,N,CP_Drtn,TT_Task,DT_FixedDUR2,RV_OK,TK_NotStart,A1030,Mechanical works,,32,0,720,0,0,0,720,0,0,0,,,,2013-06-08 08:00,2013-09-05 17:00,,2013-06-04 08:00,2013-09-01 17:00,2013-06-04 08:00,2013-09-01 17:00,2013-06-04 08:00,2013-09-01 17:00,,2013-06-08 08:00,2013-09-05 17:00,,PT_Normal,,,,,25THB5/r5kmhTdCndUrccA,uKqO/DBnFUy339EDmUMnIg,,,N,0,0,,,2012-09-27 17:08,2012-10-03 16:55,admin,admin
135,159126,7529,26766,794,1,0,N,N,N,CP_Drtn,TT_Task,DT_FixedDUR2,RV_OK,TK_NotStart,A1020,Electrical works,,32,0,720,0,0,0,720,0,0,0,,,,2013-06-08 08:00,2013-09-05 17:00,,2013-06-04 08:00,2013-09-01 17:00,2013-06-04 08:00,2013-09-01 17:00,2013-06-04 08:00,2013-09-01 17:00,,2013-06-08 08:00,2013-09-05 17:00,,PT_Normal,,,,,0m4yn2wD9Eiu96xqEIZnqw,2ynxIn73+U2E2ZWTIUVS4A,,,N,0,0,,,2012-09-27 17:08,2012-10-03 16:55,admin,admin
136,159745,7529,26753,794,1,0,N,N,N,CP_Drtn,TT_Task,DT_FixedDUR2,RV_OK,TK_NotStart,A-147,Curtain wall erection,,24,16,240,0,0,0,240,0,0,0,,,,2013-09-01 08:00,2013-09-30 17:00,,2013-08-29 08:00,2013-09-27 17:00,2013-08-29 08:00,2013-09-27 17:00,2013-08-29 08:00,2013-09-27 17:00,,2013-09-01 08:00,2013-09-30 17:00,,PT_Normal,,,,,BQxTwdlu9kCdOmE1vHPF1g,,,,N,0,0,,,2012-10-03 16:21,2012-10-03 16:55,admin,admin
137,159746,7529,26970,794,1,0,N,N,N,CP_Drtn,TT_Task,DT_FixedDUR2,RV_OK,TK_NotStart,A1040,Mechanical works,,1048,1016,720,0,0,0,720,0,0,0,,,,2013-07-03 08:00,2013-09-30 17:00,,2013-02-22 08:00,2013-05-22 17:00,2013-02-22 08:00,2013-05-22 17:00,2013-02-22 08:00,2013-05-22 17:00,,2013-07-03 08:00,2013-09-30 17:00,,PT_Normal,,,,,VYHY1kgcLEOQ3dxQmDZ9jw,25THB5/r5kmhTdCndUrccA,,,N,0,0,,,2012-10-03 16:52,2012-10-04 10:57,admin,admin
138,159747,7529,26970,794,1,0,N,N,N,CP_Drtn,TT_Task,DT_FixedDUR2,RV_OK,TK_NotStart,A1050,Electrical works,,1048,1016,720,0,0,0,720,0,0,0,,,,2013-07-03 08:00,2013-09-30 17:00,,2013-02-22 08:00,2013-05-22 17:00,2013-02-22 08:00,2013-05-22 17:00,2013-02-22 08:00,2013-05-22 17:00,,2013-07-03 08:00,2013-09-30 17:00,,PT_Normal,,,,,aMsmhBz/7UO9mLzckf730g,0m4yn2wD9Eiu96xqEIZnqw,,,N,0,0,,,2012-10-03 16:52,2012-10-03 16:55,admin,admin
139,159748,7529,26971,794,1,0,N,N,N,CP_Drtn,TT_Task,DT_FixedDUR2,RV_OK,TK_NotStart,A1060,Mechanical works,,712,680,720,0,0,0,720,0,0,0,,,,2013-06-08 08:00,2013-09-05 17:00,,2013-03-11 08:00,2013-06-08 17:00,2013-03-11 08:00,2013-06-08 17:00,2013-03-11 08:00,2013-06-08 17:00,,2013-06-08 08:00,2013-09-05 17:00,,PT_Normal,,,,,uea2ypl7bEOWBbcnE+IsAg,25THB5/r5kmhTdCndUrccA,,,N,0,0,,,2012-10-03 16:52,2012-10-03 16:55,admin,admin
140,159749,7529,26971,794,1,0,N,N,N,CP_Drtn,TT_Task,DT_FixedDUR2,RV_OK,TK_NotStart,A1070,Electrical works,,712,680,720,0,0,0,720,0,0,0,,,,2013-06-08 08:00,2013-09-05 17:00,,2013-03-11 08:00,2013-06-08 17:00,2013-03-11 08:00,2013-06-08 17:00,2013-03-11 08:00,2013-06-08 17:00,,2013-06-08 08:00,2013-09-05 17:00,,PT_Normal,,,,,RTrRULaW+E6jsfstWxgJ+A,0m4yn2wD9Eiu96xqEIZnqw,,,N,0,0,,,2012-10-03 16:52,2012-10-03 16:55,admin,admin
141,159750,7529,26757,794,1,0,N,N,N,CP_Drtn,TT_Task,DT_FixedDUR2,RV_OK,TK_NotStart,A-141,Metal works,,80,72,112,0,0,0,112,0,0,0,,,,2013-09-17 08:00,2013-09-30 17:00,,2013-09-07 08:00,2013-09-20 17:00,2013-09-07 08:00,2013-09-20 17:00,2013-09-07 08:00,2013-09-20 17:00,,2013-09-17 08:00,2013-09-30 17:00,,PT_Normal,,,,,Cv7djQxl/U+eM19EX0wlpg,,,,N,0,0,,,2012-10-04 10:46,2012-10-04 11:19,admin,admin
142,159751,7529,26765,794,1,0,N,N,N,CP_Drtn,TT_Task,DT_FixedDUR2,RV_OK,TK_NotStart,A-148,Metal works,,72,64,160,0,0,0,160,0,0,0,,,,2013-09-11 08:00,2013-09-30 17:00,,2013-09-02 08:00,2013-09-21 17:00,2013-09-02 08:00,2013-09-21 17:00,2013-09-02 08:00,2013-09-21 17:00,,2013-09-11 08:00,2013-09-30 17:00,,PT_Normal,,,,,2p77NnW6fUG/Zk/VLMyFbw,,,,N,0,0,,,2012-10-04 10:54,2012-10-04 10:57,admin,admin
143,159752,7529,26757,794,1,0,N,N,N,CP_Drtn,TT_Task,DT_FixedDUR2,RV_OK,TK_NotStart,A-151,Backfilling works,,160,152,32,0,0,0,32,0,0,0,,,,2013-09-27 08:00,2013-09-30 17:00,,2013-09-07 08:00,2013-09-10 17:00,2013-09-07 08:00,2013-09-10 17:00,2013-09-07 08:00,2013-09-10 17:00,,2013-09-27 08:00,2013-09-30 17:00,,PT_Normal,,,,,V4OCjpLI0E+ASQRGlQSBWQ,,,,N,0,0,,,2012-10-04 11:16,2012-10-04 11:19,admin,admin
144,159753,7529,26972,794,1,0,N,N,N,CP_Drtn,TT_Task,DT_FixedDUR2,RV_OK,TK_NotStart,A1080,Roads & pavement works,,120,0,480,0,0,0,480,0,0,0,,,,2013-06-03 08:00,2013-08-01 17:00,,2013-05-19 08:00,2013-07-17 17:00,2013-05-19 08:00,2013-07-17 17:00,2013-05-19 08:00,2013-07-17 17:00,,2013-06-03 08:00,2013-08-01 17:00,,PT_Normal,,,,,dcRs+d4Srk+4jkor8Kl0pQ,,,,N,0,0,,,2012-10-04 11:34,2012-10-04 11:39,admin,admin
145,159754,7529,26972,794,1,0,N,N,N,CP_Drtn,TT_Task,DT_FixedDUR2,RV_OK,TK_NotStart,A1090,Interlook works,,120,112,480,0,0,0,480,0,0,0,,,,2013-08-02 08:00,2013-09-30 17:00,,2013-07-18 08:00,2013-09-15 17:00,2013-07-18 08:00,2013-09-15 17:00,2013-07-18 08:00,2013-09-15 17:00,,2013-08-02 08:00,2013-09-30 17:00,,PT_Normal,,,,,BERpkuJNfEeSz2mN8iYzVQ,,,,N,0,0,,,2012-10-04 11:34,2012-10-04 11:39,admin,admin
146,159755,7529,26972,794,1,0,N,N,N,CP_Drtn,TT_Task,DT_FixedDUR2,RV_OK,TK_NotStart,A1100,Curb stones works,,120,0,480,0,0,0,480,0,0,0,,,,2013-07-03 08:00,2013-08-31 17:00,,2013-06-18 08:00,2013-08-16 17:00,2013-06-18 08:00,2013-08-16 17:00,2013-06-18 08:00,2013-08-16 17:00,,2013-07-03 08:00,2013-08-31 17:00,,PT_Normal,,,,,CqIyoqGCYkSDSmKiM1At8g,,,,N,0,0,,,2012-10-04 11:34,2012-10-04 11:39,admin,admin
147,159756,7529,26732,794,1,0,N,N,N,CP_Drtn,TT_Task,DT_FixedDUR2,RV_OK,TK_NotStart,A1110,Concrete works Submittal,,2664,0,160,0,0,0,160,0,0,0,,,,2013-09-06 08:00,2013-09-25 17:00,,2012-10-08 08:00,2012-10-27 17:00,2012-10-08 08:00,2012-10-27 17:00,2012-10-08 08:00,2012-10-27 17:00,,2013-09-06 08:00,2013-09-25 17:00,,PT_Normal,,,,,jyYDkkWZKECJa0AJ4n3U+g,,,,N,0,0,,,2012-10-07 12:37,2012-10-07 12:39,admin,admin
148,159757,7529,26732,794,1,0,N,N,N,CP_Drtn,TT_Task,DT_FixedDUR2,RV_OK,TK_NotStart,A1120,Concrete works approval,,2664,2656,160,0,0,0,160,0,0,0,,,,2013-09-11 08:00,2013-09-30 17:00,,2012-10-13 08:00,2012-11-01 17:00,2012-10-13 08:00,2012-11-01 17:00,2012-10-13 08:00,2012-11-01 17:00,,2013-09-11 08:00,2013-09-30 17:00,,PT_Normal,,,,,r0OGOV3F0U2kiDRLhYvVfg,,,,N,0,0,,,2012-10-07 12:37,2012-10-07 12:39,admin,admin
