,task_id,proj_id,wbs_id,clndr_id,est_wt,phys_complete_pct,rev_fdbk_flag,lock_plan_flag,auto_compute_act_flag,complete_pct_type,task_type,duration_type,review_type,status_code,task_code,task_name,rsrc_id,total_float_hr_cnt,free_float_hr_cnt,remain_drtn_hr_cnt,act_work_qty,remain_work_qty,target_work_qty,target_drtn_hr_cnt,target_equip_qty,act_equip_qty,remain_equip_qty,cstr_date,act_start_date,act_end_date,late_start_date,late_end_date,expect_end_date,early_start_date,early_end_date,restart_date,reend_date,target_start_date,target_end_date,review_end_date,rem_late_start_date,rem_late_end_date,cstr_type,priority_type,suspend_date,resume_date,float_path,float_path_order,guid,tmpl_guid,cstr_date2,cstr_type2,driving_path_flag,act_this_per_work_qty,act_this_per_equip_qty,external_early_start_date,external_late_end_date,create_date,update_date,create_user,update_user
0,113287,3004,16790,3695,1,0,N,N,N,CP_Drtn,TT_Task,DT_FixedDUR2,RV_OK,TK_NotStart,V1-60,Backfilling under slab on grade,,0,0,32,0,0,0,32,0,0,0,,,,2012-06-26 08:00,2012-06-30 16:00,,2012-06-26 08:00,2012-06-30 16:00,2012-06-26 08:00,2012-06-30 16:00,2012-06-26 08:00,2012-06-30 16:00,,2012-06-26 08:00,2012-06-30 16:00,,PT_Normal,,,,,P+laH7BehEKLWy0RRQUK/A,,,,Y,0,0,,,2012-04-08 14:33,2012-04-12 15:30,NotPrmUser,admin
1,113288,3004,16791,3695,1,0,N,N,N,CP_Drtn,TT_Task,DT_FixedDUR2,RV_OK,TK_NotStart,V1-10,P.c footing,,0,0,40,0,0,0,40,0,0,0,,,,2012-05-19 08:00,2012-05-23 16:00,,2012-05-19 08:00,2012-05-23 16:00,2012-05-19 08:00,2012-05-23 16:00,2012-05-19 08:00,2012-05-23 16:00,,2012-05-19 08:00,2012-05-23 16:00,,PT_Normal,,,,,rWhBAZkh+UeQbamarZIS4w,,,,Y,0,0,,,2012-04-08 14:33,2012-04-12 15:30,NotPrmUser,admin
2,113289,3004,16791,3695,1,0,N,N,N,CP_Drtn,TT_Task,DT_FixedDUR2,RV_OK,TK_NotStart,V1-20,R.c concrete foundations,,0,0,96,0,0,0,96,0,0,0,,,,2012-05-24 08:00,2012-06-06 16:00,,2012-05-24 08:00,2012-06-06 16:00,2012-05-24 08:00,2012-06-06 16:00,2012-05-24 08:00,2012-06-06 16:00,,2012-05-24 08:00,2012-06-06 16:00,,PT_Normal,,,,,fVuZKCCEqUqoIXD0vyQdjg,,,,Y,0,0,,,2012-04-08 14:33,2012-04-12 15:30,NotPrmUser,admin
3,113292,3004,16792,3695,1,0,N,N,N,CP_Drtn,TT_Task,DT_FixedDUR2,RV_OK,TK_NotStart,V1-30,Ground floor columns,,0,0,64,0,0,0,64,0,0,0,,,,2012-06-07 08:00,2012-06-16 16:00,,2012-06-07 08:00,2012-06-16 16:00,2012-06-07 08:00,2012-06-16 16:00,2012-06-07 08:00,2012-06-16 16:00,,2012-06-07 08:00,2012-06-16 16:00,,PT_Normal,,,,,5yj8BGn/C0W6NJuhsTVhXg,,,,Y,0,0,,,2012-04-08 14:39,2012-04-12 15:30,NotPrmUser,admin
4,113293,3004,16792,3695,1,0,N,N,N,CP_Drtn,TT_Task,DT_FixedDUR2,RV_OK,TK_NotStart,V1-70,Ground floor slab&beams&staircase,,0,0,120,0,0,0,120,0,0,0,,,,2012-07-01 08:00,2012-07-17 16:00,,2012-07-01 08:00,2012-07-17 16:00,2012-07-01 08:00,2012-07-17 16:00,2012-07-01 08:00,2012-07-17 16:00,,2012-07-01 08:00,2012-07-17 16:00,,PT_Normal,,,,,K8QiAQZJ8E2G/KYlcddHdA,,,,Y,0,0,,,2012-04-08 14:39,2012-04-12 15:30,NotPrmUser,admin
5,113294,3004,16792,3695,1,0,N,N,N,CP_Drtn,TT_Task,DT_FixedDUR2,RV_OK,TK_NotStart,V1-80,First floor columns,,56,0,64,0,0,0,64,0,0,0,,,,2012-07-26 08:00,2012-08-04 16:00,,2012-07-18 08:00,2012-07-26 16:00,2012-07-18 08:00,2012-07-26 16:00,2012-07-18 08:00,2012-07-26 16:00,,2012-07-26 08:00,2012-08-04 16:00,,PT_Normal,,,,,eGnUQOIpGkKxFd9hCQ2QWw,,,,N,0,0,,,2012-04-08 14:39,2012-04-12 15:30,NotPrmUser,admin
6,113295,3004,16792,3695,1,0,N,N,N,CP_Drtn,TT_Task,DT_FixedDUR2,RV_OK,TK_NotStart,V1-90,First floor slab&beams&staircase,,0,0,120,0,0,0,120,0,0,0,,,,2012-08-05 08:00,2012-08-28 16:00,,2012-08-05 08:00,2012-08-28 16:00,2012-08-05 08:00,2012-08-28 16:00,2012-08-05 08:00,2012-08-28 16:00,,2012-08-05 08:00,2012-08-28 16:00,,PT_Normal,,,,,qchE/fPDA0mMKwCLVYROIg,,,,Y,0,0,,,2012-04-08 14:40,2012-04-12 15:31,NotPrmUser,admin
7,113296,3004,16792,3695,1,0,N,N,N,CP_Drtn,TT_Task,DT_FixedDUR2,RV_OK,TK_NotStart,V1-100,Roof columns,,4840,0,40,0,0,0,40,0,0,0,,,,2014-08-30 08:00,2014-09-03 16:00,,2012-08-29 08:00,2012-09-03 16:00,2012-08-29 08:00,2012-09-03 16:00,2012-08-29 08:00,2012-09-03 16:00,,2014-08-30 08:00,2014-09-03 16:00,,PT_Normal,,,,,+QYvubRQAkGs6mSahC7qWg,,,,N,0,0,,,2012-04-08 14:40,2012-04-12 15:33,NotPrmUser,admin
8,113297,3004,16792,3695,1,0,N,N,N,CP_Drtn,TT_Task,DT_FixedDUR2,RV_OK,TK_NotStart,V1-120,Roof slab,,4840,0,40,0,0,0,40,0,0,0,,,,2014-09-04 08:00,2014-09-09 16:00,,2012-09-04 08:00,2012-09-09 16:00,2012-09-04 08:00,2012-09-09 16:00,2012-09-04 08:00,2012-09-09 16:00,,2014-09-04 08:00,2014-09-09 16:00,,PT_Normal,,,,,3WqknFkuD0eWsVgJp9+EuA,,,,N,0,0,,,2012-04-08 14:40,2012-04-12 15:33,NotPrmUser,admin
9,113299,3004,16793,3695,1,0,N,N,N,CP_Drtn,TT_Task,DT_FixedDUR2,RV_OK,TK_NotStart,V1-40,Masonry under slab on grade,,0,0,32,0,0,0,32,0,0,0,,,,2012-06-17 08:00,2012-06-20 16:00,,2012-06-17 08:00,2012-06-20 16:00,2012-06-17 08:00,2012-06-20 16:00,2012-06-17 08:00,2012-06-20 16:00,,2012-06-17 08:00,2012-06-20 16:00,,PT_Normal,,,,,kdLCU35NK06AA/H0CJ4kcQ,,,,Y,0,0,,,2012-04-08 14:42,2012-04-12 15:30,NotPrmUser,admin
10,113301,3004,16799,3695,1,0,N,N,N,CP_Drtn,TT_Task,DT_FixedDUR2,RV_OK,TK_NotStart,V1-50,Footings&masonry insulation,,0,0,32,0,0,0,32,0,0,0,,,,2012-06-21 08:00,2012-06-25 16:00,,2012-06-21 08:00,2012-06-25 16:00,2012-06-21 08:00,2012-06-25 16:00,2012-06-21 08:00,2012-06-25 16:00,,2012-06-21 08:00,2012-06-25 16:00,,PT_Normal,,,,,EV8tQZqf6ESVKFIk0OiwsA,,,,Y,0,0,,,2012-04-08 14:45,2012-04-12 15:30,NotPrmUser,admin
11,113303,3004,16800,3695,1,0,N,N,N,CP_Drtn,TT_Task,DT_FixedDUR2,RV_OK,TK_NotStart,A1200,Mobilization,,0,0,240,0,0,0,240,0,0,0,,,,2012-05-01 08:00,2012-06-04 16:00,,2012-05-01 08:00,2012-06-04 16:00,2012-05-01 08:00,2012-06-04 16:00,2012-05-01 08:00,2012-06-04 16:00,,2012-05-01 08:00,2012-06-04 16:00,,PT_Normal,,,,,9g1sE2VB1U6pIuVC6r00HQ,,,,Y,0,0,,,2012-04-08 15:06,2012-04-12 15:30,NotPrmUser,admin
12,113304,3004,16800,3695,1,0,N,N,N,CP_Drtn,TT_Task,DT_FixedDUR2,RV_OK,TK_NotStart,A1210,Demobilization,,5904,5904,24,0,0,0,24,0,0,0,,,,2014-10-11 08:00,2014-10-13 16:00,,2012-05-01 08:00,2012-05-03 16:00,2012-05-01 08:00,2012-05-03 16:00,2012-05-01 08:00,2012-05-03 16:00,,2014-10-11 08:00,2014-10-13 16:00,,PT_Normal,,,,,6UtKfu3ZSky5fTxS8brGMA,,,,N,0,0,,,2012-04-08 15:06,2012-04-12 15:33,NotPrmUser,admin
13,114190,3004,16793,3695,1,0,N,N,N,CP_Drtn,TT_Task,DT_FixedDUR2,RV_OK,TK_NotStart,V1-140,Masonry works,,4464,0,160,0,0,0,160,0,0,0,,,,2014-07-23 08:00,2014-08-14 16:00,,2012-09-16 08:00,2012-10-08 16:00,2012-09-16 08:00,2012-10-08 16:00,2012-09-16 08:00,2012-10-08 16:00,,2014-07-23 08:00,2014-08-14 16:00,,PT_Normal,,,,,CJq6zTuHLkWrIYXM74TVbA,,,,N,0,0,,,2012-04-12 13:05,2012-04-12 15:33,admin,admin
14,114192,3004,16794,3695,1,0,N,N,N,CP_Drtn,TT_Task,DT_FixedDUR2,RV_OK,TK_NotStart,V1-180,External plaster works,,4464,0,168,0,0,0,168,0,0,0,,,,2014-08-16 08:00,2014-09-08 16:00,,2012-10-09 08:00,2012-11-10 16:00,2012-10-09 08:00,2012-11-10 16:00,2012-10-09 08:00,2012-11-10 16:00,,2014-08-16 08:00,2014-09-08 16:00,,PT_Normal,,,,,vJvp6gwuTEGwkZOdmZmDww,,,,N,0,0,,,2012-04-12 13:13,2012-04-12 15:33,admin,admin
15,114193,3004,16795,3695,1,0,N,N,N,CP_Drtn,TT_Task,DT_FixedDUR2,RV_OK,TK_NotStart,V1-200,Flooring works,,4464,0,80,0,0,0,80,0,0,0,,,,2014-09-09 08:00,2014-09-20 16:00,,2012-11-11 08:00,2012-11-21 16:00,2012-11-11 08:00,2012-11-21 16:00,2012-11-11 08:00,2012-11-21 16:00,,2014-09-09 08:00,2014-09-20 16:00,,PT_Normal,,,,,lYHio5sIrU65FimKnSL+MA,,,,N,0,0,,,2012-04-12 13:16,2012-04-12 15:33,admin,admin
16,114194,3004,16796,3695,1,0,N,N,N,CP_Drtn,TT_Task,DT_FixedDUR2,RV_OK,TK_NotStart,V1-210,External painting,,4464,0,80,0,0,0,80,0,0,0,,,,2014-09-21 08:00,2014-10-01 16:00,,2012-11-22 08:00,2012-12-03 16:00,2012-11-22 08:00,2012-12-03 16:00,2012-11-22 08:00,2012-12-03 16:00,,2014-09-21 08:00,2014-10-01 16:00,,PT_Normal,,,,,Bzy4KMKJRkKejLAEfUGmcA,,,,N,0,0,,,2012-04-12 13:31,2012-04-12 15:33,admin,admin
17,114195,3004,16799,3695,1,0,N,N,N,CP_Drtn,TT_Task,DT_FixedDUR2,RV_OK,TK_NotStart,V1-160,Thermal insulation,,4840,0,56,0,0,0,56,0,0,0,,,,2014-09-24 08:00,2014-10-01 16:00,,2012-09-24 08:00,2012-10-01 16:00,2012-09-24 08:00,2012-10-01 16:00,2012-09-24 08:00,2012-10-01 16:00,,2014-09-24 08:00,2014-10-01 16:00,,PT_Normal,,,,,i4Llo7ZmyE2/VD2qHcehjQ,,,,N,0,0,,,2012-04-12 13:35,2012-04-12 15:33,admin,admin
18,114196,3004,16799,3695,1,0,N,N,N,CP_Drtn,TT_Task,DT_FixedDUR2,RV_OK,TK_NotStart,V1-150,Water proofing insulation,,4840,0,56,0,0,0,56,0,0,0,,,,2014-09-16 08:00,2014-09-23 16:00,,2012-09-16 08:00,2012-09-23 16:00,2012-09-16 08:00,2012-09-23 16:00,2012-09-16 08:00,2012-09-23 16:00,,2014-09-16 08:00,2014-09-23 16:00,,PT_Normal,,,,,RXtnIQVT2km1J+qBz2SrGw,,,,N,0,0,,,2012-04-12 13:35,2012-04-12 15:33,admin,admin
19,114197,3004,16797,3695,1,0,N,N,N,CP_Drtn,TT_Task,DT_FixedDUR2,RV_OK,TK_NotStart,V1-220,Doors & windows erection,,4464,4464,80,0,0,0,80,0,0,0,,,,2014-10-02 08:00,2014-10-13 16:00,,2012-12-04 08:00,2012-12-15 16:00,2012-12-04 08:00,2012-12-15 16:00,2012-12-04 08:00,2012-12-15 16:00,,2014-10-02 08:00,2014-10-13 16:00,,PT_Normal,,,,,gWuwP0LZfkGTxvwjcqmJig,,,,N,0,0,,,2012-04-12 13:39,2012-04-12 15:33,admin,admin
20,114216,3004,16798,3695,1,0,N,N,N,CP_Drtn,TT_Task,DT_FixedDUR2,RV_OK,TK_NotStart,V1-190,Mechanical & electrical works,,4792,4792,80,0,0,0,80,0,0,0,,,,2014-10-02 08:00,2014-10-13 16:00,,2012-10-09 08:00,2012-10-20 16:00,2012-10-09 08:00,2012-10-20 16:00,2012-10-09 08:00,2012-10-20 16:00,,2014-10-02 08:00,2014-10-13 16:00,,PT_Normal,,,,,Zztkg30/z0+sneGM0sNXYQ,,,,N,0,0,,,2012-04-12 13:53,2012-04-12 15:33,admin,admin
21,114217,3004,17062,3695,1,0,N,N,N,CP_Drtn,TT_Task,DT_FixedDUR2,RV_OK,TK_NotStart,V2-60,Backfilling under slab on grade,,120,120,32,0,0,0,32,0,0,0,,,,2012-09-13 08:00,2012-09-17 16:00,,2012-08-27 08:00,2012-08-30 16:00,2012-08-27 08:00,2012-08-30 16:00,2012-08-27 08:00,2012-08-30 16:00,,2012-09-13 08:00,2012-09-17 16:00,,PT_Normal,,,,,ShDE/fIDOEOkyKnTryHZaQ,P+laH7BehEKLWy0RRQUK/A,,,N,0,0,,,2012-04-12 14:18,2012-04-12 15:31,admin,admin
22,114218,3004,17061,3695,1,0,N,N,N,CP_Drtn,TT_Task,DT_FixedDUR2,RV_OK,TK_NotStart,V2-10,P.c footing,,136,0,40,0,0,0,40,0,0,0,,,,2012-07-30 08:00,2012-08-04 16:00,,2012-07-10 08:00,2012-07-15 16:00,2012-07-10 08:00,2012-07-15 16:00,2012-07-10 08:00,2012-07-15 16:00,,2012-07-30 08:00,2012-08-04 16:00,,PT_Normal,,,,,JGztBaBEFUi4ejOX00RDDQ,rWhBAZkh+UeQbamarZIS4w,,,N,0,0,,,2012-04-12 14:18,2012-04-12 15:30,admin,admin
23,114219,3004,17061,3695,1,0,N,N,N,CP_Drtn,TT_Task,DT_FixedDUR2,RV_OK,TK_NotStart,V2-20,R.c concrete foundations,,136,16,96,0,0,0,96,0,0,0,,,,2012-08-05 08:00,2012-08-25 16:00,,2012-07-16 08:00,2012-07-29 16:00,2012-07-16 08:00,2012-07-29 16:00,2012-07-16 08:00,2012-07-29 16:00,,2012-08-05 08:00,2012-08-25 16:00,,PT_Normal,,,,,uoWvhbWPi02TAt/0tFC18A,fVuZKCCEqUqoIXD0vyQdjg,,,N,0,0,,,2012-04-12 14:18,2012-04-12 15:31,admin,admin
24,114220,3004,17063,3695,1,0,N,N,N,CP_Drtn,TT_Task,DT_FixedDUR2,RV_OK,TK_NotStart,V2-30,Ground floor columns,,120,0,64,0,0,0,64,0,0,0,,,,2012-08-26 08:00,2012-09-03 16:00,,2012-08-01 08:00,2012-08-09 16:00,2012-08-01 08:00,2012-08-09 16:00,2012-08-01 08:00,2012-08-09 16:00,,2012-08-26 08:00,2012-09-03 16:00,,PT_Normal,,,,,NTmP0MKWP0SIgEOoeou5uw,5yj8BGn/C0W6NJuhsTVhXg,,,N,0,0,,,2012-04-12 14:18,2012-04-12 15:31,admin,admin
25,114221,3004,17063,3695,1,0,N,N,N,CP_Drtn,TT_Task,DT_FixedDUR2,RV_OK,TK_NotStart,V2-70,Ground floor slab&beams&staircase,,0,0,120,0,0,0,120,0,0,0,,,,2012-09-18 08:00,2012-10-04 16:00,,2012-09-18 08:00,2012-10-04 16:00,2012-09-18 08:00,2012-10-04 16:00,2012-09-18 08:00,2012-10-04 16:00,,2012-09-18 08:00,2012-10-04 16:00,,PT_Normal,,,,,O7Ur98dYnUmDFrS+UBA/Nw,K8QiAQZJ8E2G/KYlcddHdA,,,Y,0,0,,,2012-04-12 14:18,2012-04-12 15:31,admin,admin
26,114222,3004,17063,3695,1,0,N,N,N,CP_Drtn,TT_Task,DT_FixedDUR2,RV_OK,TK_NotStart,V2-80,First floor columns,,56,0,64,0,0,0,64,0,0,0,,,,2012-10-14 08:00,2012-10-22 16:00,,2012-10-06 08:00,2012-10-14 16:00,2012-10-06 08:00,2012-10-14 16:00,2012-10-06 08:00,2012-10-14 16:00,,2012-10-14 08:00,2012-10-22 16:00,,PT_Normal,,,,,j5MCnIx0kEK5irgSwVpEsg,eGnUQOIpGkKxFd9hCQ2QWw,,,N,0,0,,,2012-04-12 14:18,2012-04-12 15:31,admin,admin
27,114223,3004,17063,3695,1,0,N,N,N,CP_Drtn,TT_Task,DT_FixedDUR2,RV_OK,TK_NotStart,V2-90,First floor slab&beams&staircase,,0,0,120,0,0,0,120,0,0,0,,,,2012-10-23 08:00,2012-11-17 16:00,,2012-10-23 08:00,2012-11-17 16:00,2012-10-23 08:00,2012-11-17 16:00,2012-10-23 08:00,2012-11-17 16:00,,2012-10-23 08:00,2012-11-17 16:00,,PT_Normal,,,,,PUzomu8sN0OBErpq7iFRtg,qchE/fPDA0mMKwCLVYROIg,,,Y,0,0,,,2012-04-12 14:18,2012-04-12 15:31,admin,admin
28,114224,3004,17063,3695,1,0,N,N,N,CP_Drtn,TT_Task,DT_FixedDUR2,RV_OK,TK_NotStart,V2-100,Roof columns,,4344,0,40,0,0,0,40,0,0,0,,,,2014-08-30 08:00,2014-09-03 16:00,,2012-11-18 08:00,2012-11-22 16:00,2012-11-18 08:00,2012-11-22 16:00,2012-11-18 08:00,2012-11-22 16:00,,2014-08-30 08:00,2014-09-03 16:00,,PT_Normal,,,,,VS0+PfTvKkSNzig6bkLsoQ,+QYvubRQAkGs6mSahC7qWg,,,N,0,0,,,2012-04-12 14:18,2012-04-12 15:33,admin,admin
29,114225,3004,17063,3695,1,0,N,N,N,CP_Drtn,TT_Task,DT_FixedDUR2,RV_OK,TK_NotStart,V2-120,Roof slab,,4344,0,40,0,0,0,40,0,0,0,,,,2014-09-04 08:00,2014-09-09 16:00,,2012-11-24 08:00,2012-11-28 16:00,2012-11-24 08:00,2012-11-28 16:00,2012-11-24 08:00,2012-11-28 16:00,,2014-09-04 08:00,2014-09-09 16:00,,PT_Normal,,,,,jmcikE5MZ0i7k0XYKSP8ZQ,3WqknFkuD0eWsVgJp9+EuA,,,N,0,0,,,2012-04-12 14:18,2012-04-12 15:33,admin,admin
30,114226,3004,17064,3695,1,0,N,N,N,CP_Drtn,TT_Task,DT_FixedDUR2,RV_OK,TK_NotStart,V2-40,Masonry under slab on grade,,120,0,32,0,0,0,32,0,0,0,,,,2012-09-04 08:00,2012-09-08 16:00,,2012-08-11 08:00,2012-08-14 16:00,2012-08-11 08:00,2012-08-14 16:00,2012-08-11 08:00,2012-08-14 16:00,,2012-09-04 08:00,2012-09-08 16:00,,PT_Normal,,,,,C1FJZpxxSUCW8n44CvoAZQ,kdLCU35NK06AA/H0CJ4kcQ,,,N,0,0,,,2012-04-12 14:18,2012-04-12 15:31,admin,admin
31,114227,3004,17065,3695,1,0,N,N,N,CP_Drtn,TT_Task,DT_FixedDUR2,RV_OK,TK_NotStart,V2-50,Footings&masonry insulation,,120,0,32,0,0,0,32,0,0,0,,,,2012-09-09 08:00,2012-09-12 16:00,,2012-08-15 08:00,2012-08-26 16:00,2012-08-15 08:00,2012-08-26 16:00,2012-08-15 08:00,2012-08-26 16:00,,2012-09-09 08:00,2012-09-12 16:00,,PT_Normal,,,,,9ovx4tBIaEiwakPcsvK4xw,EV8tQZqf6ESVKFIk0OiwsA,,,N,0,0,,,2012-04-12 14:18,2012-04-12 15:31,admin,admin
32,114228,3004,17064,3695,1,0,N,N,N,CP_Drtn,TT_Task,DT_FixedDUR2,RV_OK,TK_NotStart,V2-140,Masonry works,,3968,0,160,0,0,0,160,0,0,0,,,,2014-07-23 08:00,2014-08-14 16:00,,2012-12-05 08:00,2012-12-27 16:00,2012-12-05 08:00,2012-12-27 16:00,2012-12-05 08:00,2012-12-27 16:00,,2014-07-23 08:00,2014-08-14 16:00,,PT_Normal,,,,,zBh3B56pVUiei6ZWEsMWGg,CJq6zTuHLkWrIYXM74TVbA,,,N,0,0,,,2012-04-12 14:18,2012-04-12 15:33,admin,admin
33,114229,3004,17066,3695,1,0,N,N,N,CP_Drtn,TT_Task,DT_FixedDUR2,RV_OK,TK_NotStart,V2-180,External plaster works,,3968,0,168,0,0,0,168,0,0,0,,,,2014-08-16 08:00,2014-09-08 16:00,,2012-12-29 08:00,2013-01-21 16:00,2012-12-29 08:00,2013-01-21 16:00,2012-12-29 08:00,2013-01-21 16:00,,2014-08-16 08:00,2014-09-08 16:00,,PT_Normal,,,,,mgU4YxMbFU+flchtIhUZww,vJvp6gwuTEGwkZOdmZmDww,,,N,0,0,,,2012-04-12 14:18,2012-04-12 15:33,admin,admin
34,114230,3004,17067,3695,1,0,N,N,N,CP_Drtn,TT_Task,DT_FixedDUR2,RV_OK,TK_NotStart,V2-200,Flooring works,,3968,0,80,0,0,0,80,0,0,0,,,,2014-09-09 08:00,2014-09-20 16:00,,2013-01-22 08:00,2013-02-02 16:00,2013-01-22 08:00,2013-02-02 16:00,2013-01-22 08:00,2013-02-02 16:00,,2014-09-09 08:00,2014-09-20 16:00,,PT_Normal,,,,,Z7+C8FXRDE64O+3CJFZmXg,lYHio5sIrU65FimKnSL+MA,,,N,0,0,,,2012-04-12 14:18,2012-04-12 15:33,admin,admin
35,114231,3004,17068,3695,1,0,N,N,N,CP_Drtn,TT_Task,DT_FixedDUR2,RV_OK,TK_NotStart,V2-210,External painting,,3968,0,80,0,0,0,80,0,0,0,,,,2014-09-21 08:00,2014-10-01 16:00,,2013-02-03 08:00,2013-02-13 16:00,2013-02-03 08:00,2013-02-13 16:00,2013-02-03 08:00,2013-02-13 16:00,,2014-09-21 08:00,2014-10-01 16:00,,PT_Normal,,,,,SsJLss852EuhBJz9zxLIDA,Bzy4KMKJRkKejLAEfUGmcA,,,N,0,0,,,2012-04-12 14:18,2012-04-12 15:33,admin,admin
36,114234,3004,17069,3695,1,0,N,N,N,CP_Drtn,TT_Task,DT_FixedDUR2,RV_OK,TK_NotStart,V2-220,Doors & windows erection,,3968,3968,80,0,0,0,80,0,0,0,,,,2014-10-02 08:00,2014-10-13 16:00,,2013-02-14 08:00,2013-02-25 16:00,2013-02-14 08:00,2013-02-25 16:00,2013-02-14 08:00,2013-02-25 16:00,,2014-10-02 08:00,2014-10-13 16:00,,PT_Normal,,,,,hOvIiFneBUuGDAoXz7DpDg,gWuwP0LZfkGTxvwjcqmJig,,,N,0,0,,,2012-04-12 14:18,2012-04-12 15:33,admin,admin
37,114235,3004,17070,3695,1,0,N,N,N,CP_Drtn,TT_Task,DT_FixedDUR2,RV_OK,TK_NotStart,V2-190,Mechanical & electrical works,,4296,4296,80,0,0,0,80,0,0,0,,,,2014-10-02 08:00,2014-10-13 16:00,,2012-12-29 08:00,2013-01-08 16:00,2012-12-29 08:00,2013-01-08 16:00,2012-12-29 08:00,2013-01-08 16:00,,2014-10-02 08:00,2014-10-13 16:00,,PT_Normal,,,,,ntgfkJ9PiUmK7uEFGihCiA,Zztkg30/z0+sneGM0sNXYQ,,,N,0,0,,,2012-04-12 14:18,2012-04-12 15:33,admin,admin
38,114236,3004,17073,3695,1,0,N,N,N,CP_Drtn,TT_Task,DT_FixedDUR2,RV_OK,TK_NotStart,V3-60,Backfilling under slab on grade,,120,120,32,0,0,0,32,0,0,0,,,,2012-12-03 08:00,2012-12-06 16:00,,2012-11-15 08:00,2012-11-19 16:00,2012-11-15 08:00,2012-11-19 16:00,2012-11-15 08:00,2012-11-19 16:00,,2012-12-03 08:00,2012-12-06 16:00,,PT_Normal,,,,,Vj7ChcWDk0mVzPDs9QMUCg,ShDE/fIDOEOkyKnTryHZaQ,,,N,0,0,,,2012-04-12 14:40,2012-04-12 15:31,admin,admin
39,114237,3004,17072,3695,1,0,N,N,N,CP_Drtn,TT_Task,DT_FixedDUR2,RV_OK,TK_NotStart,V3-10,P.c footing,,152,0,40,0,0,0,40,0,0,0,,,,2012-10-17 08:00,2012-10-22 16:00,,2012-09-25 08:00,2012-09-30 16:00,2012-09-25 08:00,2012-09-30 16:00,2012-09-25 08:00,2012-09-30 16:00,,2012-10-17 08:00,2012-10-22 16:00,,PT_Normal,,,,,VX0l1h7420ybK3sIaHC+yA,JGztBaBEFUi4ejOX00RDDQ,,,N,0,0,,,2012-04-12 14:40,2012-04-12 15:31,admin,admin
40,114238,3004,17072,3695,1,0,N,N,N,CP_Drtn,TT_Task,DT_FixedDUR2,RV_OK,TK_NotStart,V3-20,R.c concrete foundations,,152,32,96,0,0,0,96,0,0,0,,,,2012-10-23 08:00,2012-11-13 16:00,,2012-10-01 08:00,2012-10-14 16:00,2012-10-01 08:00,2012-10-14 16:00,2012-10-01 08:00,2012-10-14 16:00,,2012-10-23 08:00,2012-11-13 16:00,,PT_Normal,,,,,b79HXIHOVEiVrkeVuZARMQ,uoWvhbWPi02TAt/0tFC18A,,,N,0,0,,,2012-04-12 14:40,2012-04-12 15:31,admin,admin
41,114239,3004,17074,3695,1,0,N,N,N,CP_Drtn,TT_Task,DT_FixedDUR2,RV_OK,TK_NotStart,V3-30,Ground floor columns,,120,0,64,0,0,0,64,0,0,0,,,,2012-11-14 08:00,2012-11-22 16:00,,2012-10-20 08:00,2012-11-05 16:00,2012-10-20 08:00,2012-11-05 16:00,2012-10-20 08:00,2012-11-05 16:00,,2012-11-14 08:00,2012-11-22 16:00,,PT_Normal,,,,,rYG8+8MDgEKPwgDk8J/aIQ,NTmP0MKWP0SIgEOoeou5uw,,,N,0,0,,,2012-04-12 14:40,2012-04-12 15:31,admin,admin
42,114240,3004,17074,3695,1,0,N,N,N,CP_Drtn,TT_Task,DT_FixedDUR2,RV_OK,TK_NotStart,V3-70,Ground floor slab&beams&staircase,,0,0,120,0,0,0,120,0,0,0,,,,2012-12-08 08:00,2012-12-24 16:00,,2012-12-08 08:00,2012-12-24 16:00,2012-12-08 08:00,2012-12-24 16:00,2012-12-08 08:00,2012-12-24 16:00,,2012-12-08 08:00,2012-12-24 16:00,,PT_Normal,,,,,DNSaUDvUyUylgTG+niwy4A,O7Ur98dYnUmDFrS+UBA/Nw,,,Y,0,0,,,2012-04-12 14:40,2012-04-12 15:31,admin,admin
43,114241,3004,17074,3695,1,0,N,N,N,CP_Drtn,TT_Task,DT_FixedDUR2,RV_OK,TK_NotStart,V3-80,First floor columns,,56,0,64,0,0,0,64,0,0,0,,,,2013-01-02 08:00,2013-01-10 16:00,,2012-12-25 08:00,2013-01-02 16:00,2012-12-25 08:00,2013-01-02 16:00,2012-12-25 08:00,2013-01-02 16:00,,2013-01-02 08:00,2013-01-10 16:00,,PT_Normal,,,,,ZgGxsVb5Q02KqbO52vhAow,j5MCnIx0kEK5irgSwVpEsg,,,N,0,0,,,2012-04-12 14:40,2012-04-12 15:31,admin,admin
44,114242,3004,17074,3695,1,0,N,N,N,CP_Drtn,TT_Task,DT_FixedDUR2,RV_OK,TK_NotStart,V3-90,First floor slab&beams&staircase,,0,0,120,0,0,0,120,0,0,0,,,,2013-01-12 08:00,2013-01-28 16:00,,2013-01-12 08:00,2013-01-28 16:00,2013-01-12 08:00,2013-01-28 16:00,2013-01-12 08:00,2013-01-28 16:00,,2013-01-12 08:00,2013-01-28 16:00,,PT_Normal,,,,,3EzmkA7790udPg90s6q86g,PUzomu8sN0OBErpq7iFRtg,,,Y,0,0,,,2012-04-12 14:40,2012-04-12 15:31,admin,admin
45,114243,3004,17074,3695,1,0,N,N,N,CP_Drtn,TT_Task,DT_FixedDUR2,RV_OK,TK_NotStart,V3-100,Roof columns,,3848,0,40,0,0,0,40,0,0,0,,,,2014-08-30 08:00,2014-09-03 16:00,,2013-01-29 08:00,2013-02-03 16:00,2013-01-29 08:00,2013-02-03 16:00,2013-01-29 08:00,2013-02-03 16:00,,2014-08-30 08:00,2014-09-03 16:00,,PT_Normal,,,,,T808pk9Imkm7o/R9JOg4tQ,VS0+PfTvKkSNzig6bkLsoQ,,,N,0,0,,,2012-04-12 14:40,2012-04-12 15:33,admin,admin
46,114244,3004,17074,3695,1,0,N,N,N,CP_Drtn,TT_Task,DT_FixedDUR2,RV_OK,TK_NotStart,V3-120,Roof slab,,3848,0,40,0,0,0,40,0,0,0,,,,2014-09-04 08:00,2014-09-09 16:00,,2013-02-04 08:00,2013-02-09 16:00,2013-02-04 08:00,2013-02-09 16:00,2013-02-04 08:00,2013-02-09 16:00,,2014-09-04 08:00,2014-09-09 16:00,,PT_Normal,,,,,jJHCTEBxkUWevyuSJdVBzA,jmcikE5MZ0i7k0XYKSP8ZQ,,,N,0,0,,,2012-04-12 14:40,2012-04-12 15:33,admin,admin
47,114245,3004,17075,3695,1,0,N,N,N,CP_Drtn,TT_Task,DT_FixedDUR2,RV_OK,TK_NotStart,V3-40,Masonry under slab on grade,,120,0,32,0,0,0,32,0,0,0,,,,2012-11-24 08:00,2012-11-27 16:00,,2012-11-06 08:00,2012-11-10 16:00,2012-11-06 08:00,2012-11-10 16:00,2012-11-06 08:00,2012-11-10 16:00,,2012-11-24 08:00,2012-11-27 16:00,,PT_Normal,,,,,mtNYOPzJ0kiEkc2guVAMYg,C1FJZpxxSUCW8n44CvoAZQ,,,N,0,0,,,2012-04-12 14:40,2012-04-12 15:31,admin,admin
48,114246,3004,17076,3695,1,0,N,N,N,CP_Drtn,TT_Task,DT_FixedDUR2,RV_OK,TK_NotStart,V3-50,Footings&masonry insulation,,120,0,32,0,0,0,32,0,0,0,,,,2012-11-28 08:00,2012-12-02 16:00,,2012-11-11 08:00,2012-11-14 16:00,2012-11-11 08:00,2012-11-14 16:00,2012-11-11 08:00,2012-11-14 16:00,,2012-11-28 08:00,2012-12-02 16:00,,PT_Normal,,,,,KehJcs3qC0+2sN8xTraqig,9ovx4tBIaEiwakPcsvK4xw,,,N,0,0,,,2012-04-12 14:40,2012-04-12 15:31,admin,admin
49,114247,3004,17075,3695,1,0,N,N,N,CP_Drtn,TT_Task,DT_FixedDUR2,RV_OK,TK_NotStart,V3-140,Masonry works,,3472,0,160,0,0,0,160,0,0,0,,,,2014-07-23 08:00,2014-08-14 16:00,,2013-02-16 08:00,2013-03-10 16:00,2013-02-16 08:00,2013-03-10 16:00,2013-02-16 08:00,2013-03-10 16:00,,2014-07-23 08:00,2014-08-14 16:00,,PT_Normal,,,,,8l+bmLybY06pK3PXJgtYyA,zBh3B56pVUiei6ZWEsMWGg,,,N,0,0,,,2012-04-12 14:40,2012-04-12 15:33,admin,admin
50,114248,3004,17077,3695,1,0,N,N,N,CP_Drtn,TT_Task,DT_FixedDUR2,RV_OK,TK_NotStart,V3-180,External plaster works,,3472,0,168,0,0,0,168,0,0,0,,,,2014-08-16 08:00,2014-09-08 16:00,,2013-03-11 08:00,2013-04-03 16:00,2013-03-11 08:00,2013-04-03 16:00,2013-03-11 08:00,2013-04-03 16:00,,2014-08-16 08:00,2014-09-08 16:00,,PT_Normal,,,,,x61jQXdO9ECedl+Be8r0jQ,mgU4YxMbFU+flchtIhUZww,,,N,0,0,,,2012-04-12 14:40,2012-04-12 15:33,admin,admin
51,114249,3004,17078,3695,1,0,N,N,N,CP_Drtn,TT_Task,DT_FixedDUR2,RV_OK,TK_NotStart,V3-200,Flooring works,,3472,0,80,0,0,0,80,0,0,0,,,,2014-09-09 08:00,2014-09-20 16:00,,2013-04-04 08:00,2013-04-15 16:00,2013-04-04 08:00,2013-04-15 16:00,2013-04-04 08:00,2013-04-15 16:00,,2014-09-09 08:00,2014-09-20 16:00,,PT_Normal,,,,,JNU0aZoYzEO3e8IOSwVrgg,Z7+C8FXRDE64O+3CJFZmXg,,,N,0,0,,,2012-04-12 14:40,2012-04-12 15:33,admin,admin
52,114250,3004,17079,3695,1,0,N,N,N,CP_Drtn,TT_Task,DT_FixedDUR2,RV_OK,TK_NotStart,V3-210,External painting,,3472,0,80,0,0,0,80,0,0,0,,,,2014-09-21 08:00,2014-10-01 16:00,,2013-04-16 08:00,2013-04-27 16:00,2013-04-16 08:00,2013-04-27 16:00,2013-04-16 08:00,2013-04-27 16:00,,2014-09-21 08:00,2014-10-01 16:00,,PT_Normal,,,,,XJw82lEof0C8PASlX3KkIg,SsJLss852EuhBJz9zxLIDA,,,N,0,0,,,2012-04-12 14:40,2012-04-12 15:33,admin,admin
53,114253,3004,17080,3695,1,0,N,N,N,CP_Drtn,TT_Task,DT_FixedDUR2,RV_OK,TK_NotStart,V3-220,Doors & windows erection,,3472,3472,80,0,0,0,80,0,0,0,,,,2014-10-02 08:00,2014-10-13 16:00,,2013-04-28 08:00,2013-05-08 16:00,2013-04-28 08:00,2013-05-08 16:00,2013-04-28 08:00,2013-05-08 16:00,,2014-10-02 08:00,2014-10-13 16:00,,PT_Normal,,,,,bySYW2EIzkS3SEvQ/nq3ew,hOvIiFneBUuGDAoXz7DpDg,,,N,0,0,,,2012-04-12 14:40,2012-04-12 15:33,admin,admin
54,114254,3004,17081,3695,1,0,N,N,N,CP_Drtn,TT_Task,DT_FixedDUR2,RV_OK,TK_NotStart,V3-190,Mechanical & electrical works,,3800,3800,80,0,0,0,80,0,0,0,,,,2014-10-02 08:00,2014-10-13 16:00,,2013-03-11 08:00,2013-03-21 16:00,2013-03-11 08:00,2013-03-21 16:00,2013-03-11 08:00,2013-03-21 16:00,,2014-10-02 08:00,2014-10-13 16:00,,PT_Normal,,,,,1lmdSqPzc0aXC7nsy79tjg,ntgfkJ9PiUmK7uEFGihCiA,,,N,0,0,,,2012-04-12 14:40,2012-04-12 15:33,admin,admin
55,114255,3004,16799,3695,1,0,N,N,N,CP_Drtn,TT_Task,DT_FixedDUR2,RV_OK,TK_NotStart,V1-130,Slopped concrete,,4840,0,40,0,0,0,40,0,0,0,,,,2014-09-10 08:00,2014-09-15 16:00,,2012-09-10 08:00,2012-09-15 16:00,2012-09-10 08:00,2012-09-15 16:00,2012-09-10 08:00,2012-09-15 16:00,,2014-09-10 08:00,2014-09-15 16:00,,PT_Normal,,,,,v7RYkWjI6EyC3oEf/ySU9A,,,,N,0,0,,,2012-04-12 14:53,2012-04-12 15:33,admin,admin
56,114256,3004,16799,3695,1,0,N,N,N,CP_Drtn,TT_Task,DT_FixedDUR2,RV_OK,TK_NotStart,V1-170,Cement tiles,,4840,4840,80,0,0,0,80,0,0,0,,,,2014-10-02 08:00,2014-10-13 16:00,,2012-10-02 08:00,2012-10-13 16:00,2012-10-02 08:00,2012-10-13 16:00,2012-10-02 08:00,2012-10-13 16:00,,2014-10-02 08:00,2014-10-13 16:00,,PT_Normal,,,,,hqnubqZTckaJEFiWb5ejgg,,,,N,0,0,,,2012-04-12 14:54,2012-04-12 15:33,admin,admin
57,114258,3004,17065,3695,1,0,N,N,N,CP_Drtn,TT_Task,DT_FixedDUR2,RV_OK,TK_NotStart,V2-160,Thermal insulation,,4344,0,56,0,0,0,56,0,0,0,,,,2014-09-24 08:00,2014-10-01 16:00,,2012-12-13 08:00,2012-12-20 16:00,2012-12-13 08:00,2012-12-20 16:00,2012-12-13 08:00,2012-12-20 16:00,,2014-09-24 08:00,2014-10-01 16:00,,PT_Normal,,,,,IHaGQG3HA0+vvIC/LTcSrQ,i4Llo7ZmyE2/VD2qHcehjQ,,,N,0,0,,,2012-04-12 14:56,2012-04-12 15:33,admin,admin
58,114259,3004,17065,3695,1,0,N,N,N,CP_Drtn,TT_Task,DT_FixedDUR2,RV_OK,TK_NotStart,V2-150,Water proofing insulation,,4344,0,56,0,0,0,56,0,0,0,,,,2014-09-16 08:00,2014-09-23 16:00,,2012-12-05 08:00,2012-12-12 16:00,2012-12-05 08:00,2012-12-12 16:00,2012-12-05 08:00,2012-12-12 16:00,,2014-09-16 08:00,2014-09-23 16:00,,PT_Normal,,,,,i/z+RVkE0USyxUt2OUdAYA,RXtnIQVT2km1J+qBz2SrGw,,,N,0,0,,,2012-04-12 14:56,2012-04-12 15:33,admin,admin
59,114260,3004,17065,3695,1,0,N,N,N,CP_Drtn,TT_Task,DT_FixedDUR2,RV_OK,TK_NotStart,V2-130,Slopped concrete,,4344,0,40,0,0,0,40,0,0,0,,,,2014-09-10 08:00,2014-09-15 16:00,,2012-11-29 08:00,2012-12-04 16:00,2012-11-29 08:00,2012-12-04 16:00,2012-11-29 08:00,2012-12-04 16:00,,2014-09-10 08:00,2014-09-15 16:00,,PT_Normal,,,,,KRz+mjgGtk2KZ4mfpVP3bw,v7RYkWjI6EyC3oEf/ySU9A,,,N,0,0,,,2012-04-12 14:56,2012-04-12 15:33,admin,admin
60,114261,3004,17065,3695,1,0,N,N,N,CP_Drtn,TT_Task,DT_FixedDUR2,RV_OK,TK_NotStart,V2-170,Cement tiles,,4344,4344,80,0,0,0,80,0,0,0,,,,2014-10-02 08:00,2014-10-13 16:00,,2012-12-22 08:00,2013-01-01 16:00,2012-12-22 08:00,2013-01-01 16:00,2012-12-22 08:00,2013-01-01 16:00,,2014-10-02 08:00,2014-10-13 16:00,,PT_Normal,,,,,CoYQ5VkebECNrUFmmxKONQ,hqnubqZTckaJEFiWb5ejgg,,,N,0,0,,,2012-04-12 14:56,2012-04-12 15:33,admin,admin
61,114262,3004,17076,3695,1,0,N,N,N,CP_Drtn,TT_Task,DT_FixedDUR2,RV_OK,TK_NotStart,V3-160,Thermal insulation,,3848,0,56,0,0,0,56,0,0,0,,,,2014-09-24 08:00,2014-10-01 16:00,,2013-02-24 08:00,2013-03-03 16:00,2013-02-24 08:00,2013-03-03 16:00,2013-02-24 08:00,2013-03-03 16:00,,2014-09-24 08:00,2014-10-01 16:00,,PT_Normal,,,,,RFnQATR3bEK8QwHm6bq3DQ,i4Llo7ZmyE2/VD2qHcehjQ,,,N,0,0,,,2012-04-12 14:57,2012-04-12 15:33,admin,admin
62,114263,3004,17076,3695,1,0,N,N,N,CP_Drtn,TT_Task,DT_FixedDUR2,RV_OK,TK_NotStart,V3-150,Water proofing insulation,,3848,0,56,0,0,0,56,0,0,0,,,,2014-09-16 08:00,2014-09-23 16:00,,2013-02-16 08:00,2013-02-23 16:00,2013-02-16 08:00,2013-02-23 16:00,2013-02-16 08:00,2013-02-23 16:00,,2014-09-16 08:00,2014-09-23 16:00,,PT_Normal,,,,,uaP/TONfu0GA4cbS6K4Iag,RXtnIQVT2km1J+qBz2SrGw,,,N,0,0,,,2012-04-12 14:57,2012-04-12 15:33,admin,admin
63,114264,3004,17076,3695,1,0,N,N,N,CP_Drtn,TT_Task,DT_FixedDUR2,RV_OK,TK_NotStart,V3-130,Slopped concrete,,3848,0,40,0,0,0,40,0,0,0,,,,2014-09-10 08:00,2014-09-15 16:00,,2013-02-10 08:00,2013-02-14 16:00,2013-02-10 08:00,2013-02-14 16:00,2013-02-10 08:00,2013-02-14 16:00,,2014-09-10 08:00,2014-09-15 16:00,,PT_Normal,,,,,KWa7J5bjHEuoQkkKfoCukg,v7RYkWjI6EyC3oEf/ySU9A,,,N,0,0,,,2012-04-12 14:57,2012-04-12 15:33,admin,admin
64,114265,3004,17076,3695,1,0,N,N,N,CP_Drtn,TT_Task,DT_FixedDUR2,RV_OK,TK_NotStart,V3-170,Cement tiles,,3848,3848,80,0,0,0,80,0,0,0,,,,2014-10-02 08:00,2014-10-13 16:00,,2013-03-04 08:00,2013-03-14 16:00,2013-03-04 08:00,2013-03-14 16:00,2013-03-04 08:00,2013-03-14 16:00,,2014-10-02 08:00,2014-10-13 16:00,,PT_Normal,,,,,0sQbeEDjwUGdS3QycSWfOg,hqnubqZTckaJEFiWb5ejgg,,,N,0,0,,,2012-04-12 14:57,2012-04-12 15:33,admin,admin
65,114266,3004,17063,3695,1,0,N,N,N,CP_Drtn,TT_Task,DT_FixedDUR2,RV_OK,TK_NotStart,V2-110,Slab on grade(R.C&P.C),,4048,80,40,0,0,0,40,0,0,0,,,,2014-07-17 08:00,2014-07-22 16:00,,2012-11-18 08:00,2012-11-22 16:00,2012-11-18 08:00,2012-11-22 16:00,2012-11-18 08:00,2012-11-22 16:00,,2014-07-17 08:00,2014-07-22 16:00,,PT_Normal,,,,,vMWm8BD9jUOtj+hq3wgSig,,,,N,0,0,,,2012-04-12 14:59,2012-04-12 15:33,admin,admin
66,114267,3004,16792,3695,1,0,N,N,N,CP_Drtn,TT_Task,DT_FixedDUR2,RV_OK,TK_NotStart,V1-110,Slab on grade(R.C&P.C),,4544,80,40,0,0,0,40,0,0,0,,,,2014-07-17 08:00,2014-07-22 16:00,,2012-08-29 08:00,2012-09-03 16:00,2012-08-29 08:00,2012-09-03 16:00,2012-08-29 08:00,2012-09-03 16:00,,2014-07-17 08:00,2014-07-22 16:00,,PT_Normal,,,,,dEOM/i4yIkSiT98sBjOx3g,vMWm8BD9jUOtj+hq3wgSig,,,N,0,0,,,2012-04-12 15:02,2012-04-12 15:33,admin,admin
67,114268,3004,17074,3695,1,0,N,N,N,CP_Drtn,TT_Task,DT_FixedDUR2,RV_OK,TK_NotStart,V3-110,Slab on grade(R.C&P.C),,3552,80,40,0,0,0,40,0,0,0,,,,2014-07-17 08:00,2014-07-22 16:00,,2013-01-29 08:00,2013-02-03 16:00,2013-01-29 08:00,2013-02-03 16:00,2013-01-29 08:00,2013-02-03 16:00,,2014-07-17 08:00,2014-07-22 16:00,,PT_Normal,,,,,I9yh+ofsNUiEjml2urDgmQ,vMWm8BD9jUOtj+hq3wgSig,,,N,0,0,,,2012-04-12 15:02,2012-04-12 15:33,admin,admin
68,114269,3004,17084,3695,1,0,N,N,N,CP_Drtn,TT_Task,DT_FixedDUR2,RV_OK,TK_NotStart,V4-10,Backfilling under slab on grade,,120,120,32,0,0,0,32,0,0,0,,,,2013-02-13 08:00,2013-02-17 16:00,,2013-01-27 08:00,2013-01-30 16:00,2013-01-27 08:00,2013-01-30 16:00,2013-01-27 08:00,2013-01-30 16:00,,2013-02-13 08:00,2013-02-17 16:00,,PT_Normal,,,,,d8KCY3snvUKcPA/kf7CHsQ,Vj7ChcWDk0mVzPDs9QMUCg,,,N,0,0,,,2012-04-12 15:09,2012-04-12 15:31,admin,admin
69,114270,3004,17083,3695,1,0,N,N,N,CP_Drtn,TT_Task,DT_FixedDUR2,RV_OK,TK_NotStart,V4-20,P.c footing,,168,0,40,0,0,0,40,0,0,0,,,,2013-01-06 08:00,2013-01-10 16:00,,2012-12-12 08:00,2012-12-17 16:00,2012-12-12 08:00,2012-12-17 16:00,2012-12-12 08:00,2012-12-17 16:00,,2013-01-06 08:00,2013-01-10 16:00,,PT_Normal,,,,,txgFcPBLtEez+9echh225w,VX0l1h7420ybK3sIaHC+yA,,,N,0,0,,,2012-04-12 15:09,2012-04-12 15:31,admin,admin
70,114271,3004,17083,3695,1,0,N,N,N,CP_Drtn,TT_Task,DT_FixedDUR2,RV_OK,TK_NotStart,V4-30,R.c concrete foundations,,168,48,96,0,0,0,96,0,0,0,,,,2013-01-12 08:00,2013-01-24 16:00,,2012-12-18 08:00,2012-12-31 16:00,2012-12-18 08:00,2012-12-31 16:00,2012-12-18 08:00,2012-12-31 16:00,,2013-01-12 08:00,2013-01-24 16:00,,PT_Normal,,,,,gSUdU0cQqUKjtIq7n1SNrQ,b79HXIHOVEiVrkeVuZARMQ,,,N,0,0,,,2012-04-12 15:09,2012-04-12 15:33,admin,admin
71,114272,3004,17085,3695,1,0,N,N,N,CP_Drtn,TT_Task,DT_FixedDUR2,RV_OK,TK_NotStart,V4-40,Ground floor columns,,120,0,64,0,0,0,64,0,0,0,,,,2013-01-26 08:00,2013-02-03 16:00,,2013-01-08 08:00,2013-01-16 16:00,2013-01-08 08:00,2013-01-16 16:00,2013-01-08 08:00,2013-01-16 16:00,,2013-01-26 08:00,2013-02-03 16:00,,PT_Normal,,,,,7LKVqY2qTEO763+XR9cNJQ,rYG8+8MDgEKPwgDk8J/aIQ,,,N,0,0,,,2012-04-12 15:09,2012-04-12 15:31,admin,admin
72,114273,3004,17085,3695,1,0,N,N,N,CP_Drtn,TT_Task,DT_FixedDUR2,RV_OK,TK_NotStart,V4-50,Ground floor slab&beams&staircase,,0,0,120,0,0,0,120,0,0,0,,,,2013-02-18 08:00,2013-03-06 16:00,,2013-02-18 08:00,2013-03-06 16:00,2013-02-18 08:00,2013-03-06 16:00,2013-02-18 08:00,2013-03-06 16:00,,2013-02-18 08:00,2013-03-06 16:00,,PT_Normal,,,,,dLfOymxDlUaXiuSJpwtcNQ,DNSaUDvUyUylgTG+niwy4A,,,Y,0,0,,,2012-04-12 15:09,2012-04-12 15:31,admin,admin
73,114274,3004,17085,3695,1,0,N,N,N,CP_Drtn,TT_Task,DT_FixedDUR2,RV_OK,TK_NotStart,V4-60,First floor columns,,56,0,64,0,0,0,64,0,0,0,,,,2013-03-16 08:00,2013-03-24 16:00,,2013-03-07 08:00,2013-03-16 16:00,2013-03-07 08:00,2013-03-16 16:00,2013-03-07 08:00,2013-03-16 16:00,,2013-03-16 08:00,2013-03-24 16:00,,PT_Normal,,,,,eR0mfMY3i0emAEBXZTjMWw,ZgGxsVb5Q02KqbO52vhAow,,,N,0,0,,,2012-04-12 15:09,2012-04-12 15:33,admin,admin
74,114275,3004,17085,3695,1,0,N,N,N,CP_Drtn,TT_Task,DT_FixedDUR2,RV_OK,TK_NotStart,V4-70,First floor slab&beams&staircase,,0,0,120,0,0,0,120,0,0,0,,,,2013-03-25 08:00,2013-04-10 16:00,,2013-03-25 08:00,2013-04-10 16:00,2013-03-25 08:00,2013-04-10 16:00,2013-03-25 08:00,2013-04-10 16:00,,2013-03-25 08:00,2013-04-10 16:00,,PT_Normal,,,,,AeI85D3nlUK1fxi4bC7muQ,3EzmkA7790udPg90s6q86g,,,Y,0,0,,,2012-04-12 15:09,2012-04-12 15:31,admin,admin
75,114276,3004,17085,3695,1,0,N,N,N,CP_Drtn,TT_Task,DT_FixedDUR2,RV_OK,TK_NotStart,V4-80,Roof columns,,3352,0,40,0,0,0,40,0,0,0,,,,2014-08-30 08:00,2014-09-03 16:00,,2013-04-11 08:00,2013-04-16 16:00,2013-04-11 08:00,2013-04-16 16:00,2013-04-11 08:00,2013-04-16 16:00,,2014-08-30 08:00,2014-09-03 16:00,,PT_Normal,,,,,tpShnicnCkmx9f/6eY4Fbg,T808pk9Imkm7o/R9JOg4tQ,,,N,0,0,,,2012-04-12 15:09,2012-04-12 15:33,admin,admin
76,114277,3004,17085,3695,1,0,N,N,N,CP_Drtn,TT_Task,DT_FixedDUR2,RV_OK,TK_NotStart,V4-90,Roof slab,,3352,0,40,0,0,0,40,0,0,0,,,,2014-09-04 08:00,2014-09-09 16:00,,2013-04-17 08:00,2013-04-22 16:00,2013-04-17 08:00,2013-04-22 16:00,2013-04-17 08:00,2013-04-22 16:00,,2014-09-04 08:00,2014-09-09 16:00,,PT_Normal,,,,,V+5PoENo50ephyf0PP+Iuw,jJHCTEBxkUWevyuSJdVBzA,,,N,0,0,,,2012-04-12 15:09,2012-04-12 15:33,admin,admin
77,114278,3004,17086,3695,1,0,N,N,N,CP_Drtn,TT_Task,DT_FixedDUR2,RV_OK,TK_NotStart,V4-100,Masonry under slab on grade,,120,0,32,0,0,0,32,0,0,0,,,,2013-02-04 08:00,2013-02-07 16:00,,2013-01-17 08:00,2013-01-21 16:00,2013-01-17 08:00,2013-01-21 16:00,2013-01-17 08:00,2013-01-21 16:00,,2013-02-04 08:00,2013-02-07 16:00,,PT_Normal,,,,,5lIDplAa+kGPjlEYpT1huA,mtNYOPzJ0kiEkc2guVAMYg,,,N,0,0,,,2012-04-12 15:09,2012-04-12 15:31,admin,admin
78,114279,3004,17087,3695,1,0,N,N,N,CP_Drtn,TT_Task,DT_FixedDUR2,RV_OK,TK_NotStart,V4-110,Footings&masonry insulation,,120,0,32,0,0,0,32,0,0,0,,,,2013-02-09 08:00,2013-02-12 16:00,,2013-01-22 08:00,2013-01-26 16:00,2013-01-22 08:00,2013-01-26 16:00,2013-01-22 08:00,2013-01-26 16:00,,2013-02-09 08:00,2013-02-12 16:00,,PT_Normal,,,,,w+RJ5czMzUGH4z3qbnQ4eg,KehJcs3qC0+2sN8xTraqig,,,N,0,0,,,2012-04-12 15:09,2012-04-12 15:31,admin,admin
79,114280,3004,17086,3695,1,0,N,N,N,CP_Drtn,TT_Task,DT_FixedDUR2,RV_OK,TK_NotStart,V4-120,Masonry works,,2976,0,160,0,0,0,160,0,0,0,,,,2014-07-23 08:00,2014-08-14 16:00,,2013-04-29 08:00,2013-05-21 16:00,2013-04-29 08:00,2013-05-21 16:00,2013-04-29 08:00,2013-05-21 16:00,,2014-07-23 08:00,2014-08-14 16:00,,PT_Normal,,,,,HHBcp2R/Fkismwd5WhipbA,8l+bmLybY06pK3PXJgtYyA,,,N,0,0,,,2012-04-12 15:09,2012-04-12 15:33,admin,admin
80,114281,3004,17088,3695,1,0,N,N,N,CP_Drtn,TT_Task,DT_FixedDUR2,RV_OK,TK_NotStart,V4-130,External plaster works,,2976,0,168,0,0,0,168,0,0,0,,,,2014-08-16 08:00,2014-09-08 16:00,,2013-05-22 08:00,2013-06-15 16:00,2013-05-22 08:00,2013-06-15 16:00,2013-05-22 08:00,2013-06-15 16:00,,2014-08-16 08:00,2014-09-08 16:00,,PT_Normal,,,,,2Tr7XXgrd0mnqw7/47VJlA,x61jQXdO9ECedl+Be8r0jQ,,,N,0,0,,,2012-04-12 15:09,2012-04-12 15:33,admin,admin
81,114282,3004,17089,3695,1,0,N,N,N,CP_Drtn,TT_Task,DT_FixedDUR2,RV_OK,TK_NotStart,V4-140,Flooring works,,2976,0,80,0,0,0,80,0,0,0,,,,2014-09-09 08:00,2014-09-20 16:00,,2013-06-16 08:00,2013-06-26 16:00,2013-06-16 08:00,2013-06-26 16:00,2013-06-16 08:00,2013-06-26 16:00,,2014-09-09 08:00,2014-09-20 16:00,,PT_Normal,,,,,/F5MGjgysUiNVa5iI640cw,JNU0aZoYzEO3e8IOSwVrgg,,,N,0,0,,,2012-04-12 15:09,2012-04-12 15:33,admin,admin
82,114283,3004,17090,3695,1,0,N,N,N,CP_Drtn,TT_Task,DT_FixedDUR2,RV_OK,TK_NotStart,V4-150,External painting,,2976,0,80,0,0,0,80,0,0,0,,,,2014-09-21 08:00,2014-10-01 16:00,,2013-06-27 08:00,2013-07-08 16:00,2013-06-27 08:00,2013-07-08 16:00,2013-06-27 08:00,2013-07-08 16:00,,2014-09-21 08:00,2014-10-01 16:00,,PT_Normal,,,,,QAI+3y4ozk2aSw8heajpYQ,XJw82lEof0C8PASlX3KkIg,,,N,0,0,,,2012-04-12 15:09,2012-04-12 15:33,admin,admin
83,114284,3004,17091,3695,1,0,N,N,N,CP_Drtn,TT_Task,DT_FixedDUR2,RV_OK,TK_NotStart,V4-160,Doors & windows erection,,2976,2976,80,0,0,0,80,0,0,0,,,,2014-10-02 08:00,2014-10-13 16:00,,2013-07-09 08:00,2013-07-20 16:00,2013-07-09 08:00,2013-07-20 16:00,2013-07-09 08:00,2013-07-20 16:00,,2014-10-02 08:00,2014-10-13 16:00,,PT_Normal,,,,,nNNkgbCXxEuPBrZThbcTxg,bySYW2EIzkS3SEvQ/nq3ew,,,N,0,0,,,2012-04-12 15:09,2012-04-12 15:33,admin,admin
84,114285,3004,17092,3695,1,0,N,N,N,CP_Drtn,TT_Task,DT_FixedDUR2,RV_OK,TK_NotStart,V4-170,Mechanical & electrical works,,3304,3304,80,0,0,0,80,0,0,0,,,,2014-10-02 08:00,2014-10-13 16:00,,2013-05-22 08:00,2013-06-02 16:00,2013-05-22 08:00,2013-06-02 16:00,2013-05-22 08:00,2013-06-02 16:00,,2014-10-02 08:00,2014-10-13 16:00,,PT_Normal,,,,,/0sfhG/qdEya1NE3c18HpQ,1lmdSqPzc0aXC7nsy79tjg,,,N,0,0,,,2012-04-12 15:09,2012-04-12 15:33,admin,admin
85,114286,3004,17087,3695,1,0,N,N,N,CP_Drtn,TT_Task,DT_FixedDUR2,RV_OK,TK_NotStart,V4-180,Thermal insulation,,3352,0,56,0,0,0,56,0,0,0,,,,2014-09-24 08:00,2014-10-01 16:00,,2013-05-07 08:00,2013-05-14 16:00,2013-05-07 08:00,2013-05-14 16:00,2013-05-07 08:00,2013-05-14 16:00,,2014-09-24 08:00,2014-10-01 16:00,,PT_Normal,,,,,X28e+kW4lEirSHFEs/hrwQ,RFnQATR3bEK8QwHm6bq3DQ,,,N,0,0,,,2012-04-12 15:09,2012-04-12 15:33,admin,admin
86,114287,3004,17087,3695,1,0,N,N,N,CP_Drtn,TT_Task,DT_FixedDUR2,RV_OK,TK_NotStart,V4-190,Water proofing insulation,,3352,0,56,0,0,0,56,0,0,0,,,,2014-09-16 08:00,2014-09-23 16:00,,2013-04-29 08:00,2013-05-06 16:00,2013-04-29 08:00,2013-05-06 16:00,2013-04-29 08:00,2013-05-06 16:00,,2014-09-16 08:00,2014-09-23 16:00,,PT_Normal,,,,,dyAtcbtqGUCzTx1owB/BVQ,uaP/TONfu0GA4cbS6K4Iag,,,N,0,0,,,2012-04-12 15:09,2012-04-12 15:33,admin,admin
87,114288,3004,17087,3695,1,0,N,N,N,CP_Drtn,TT_Task,DT_FixedDUR2,RV_OK,TK_NotStart,V4-200,Slopped concrete,,3352,0,40,0,0,0,40,0,0,0,,,,2014-09-10 08:00,2014-09-15 16:00,,2013-04-23 08:00,2013-04-28 16:00,2013-04-23 08:00,2013-04-28 16:00,2013-04-23 08:00,2013-04-28 16:00,,2014-09-10 08:00,2014-09-15 16:00,,PT_Normal,,,,,gP0m+Jm+Ak2gLEl/NVfpXQ,KWa7J5bjHEuoQkkKfoCukg,,,N,0,0,,,2012-04-12 15:09,2012-04-12 15:33,admin,admin
88,114289,3004,17087,3695,1,0,N,N,N,CP_Drtn,TT_Task,DT_FixedDUR2,RV_OK,TK_NotStart,V4-210,Cement tiles,,3352,3352,80,0,0,0,80,0,0,0,,,,2014-10-02 08:00,2014-10-13 16:00,,2013-05-15 08:00,2013-05-26 16:00,2013-05-15 08:00,2013-05-26 16:00,2013-05-15 08:00,2013-05-26 16:00,,2014-10-02 08:00,2014-10-13 16:00,,PT_Normal,,,,,9tqTS/kSqkemQmsi7lCQyQ,0sQbeEDjwUGdS3QycSWfOg,,,N,0,0,,,2012-04-12 15:09,2012-04-12 15:33,admin,admin
89,114290,3004,17085,3695,1,0,N,N,N,CP_Drtn,TT_Task,DT_FixedDUR2,RV_OK,TK_NotStart,V4-220,Slab on grade(R.C&P.C),,3056,80,40,0,0,0,40,0,0,0,,,,2014-07-17 08:00,2014-07-22 16:00,,2013-04-11 08:00,2013-04-16 16:00,2013-04-11 08:00,2013-04-16 16:00,2013-04-11 08:00,2013-04-16 16:00,,2014-07-17 08:00,2014-07-22 16:00,,PT_Normal,,,,,U6aevI2hG0C0TGTKb9lZLg,I9yh+ofsNUiEjml2urDgmQ,,,N,0,0,,,2012-04-12 15:09,2012-04-12 15:33,admin,admin
90,114291,3004,17095,3695,1,0,N,N,N,CP_Drtn,TT_Task,DT_FixedDUR2,RV_OK,TK_NotStart,V5-10,Backfilling under slab on grade,,120,120,32,0,0,0,32,0,0,0,,,,2013-04-27 08:00,2013-04-30 16:00,,2013-04-09 08:00,2013-04-13 16:00,2013-04-09 08:00,2013-04-13 16:00,2013-04-09 08:00,2013-04-13 16:00,,2013-04-27 08:00,2013-04-30 16:00,,PT_Normal,,,,,vbekSQAWpEehMXoahewg0Q,d8KCY3snvUKcPA/kf7CHsQ,,,N,0,0,,,2012-04-12 15:32,2012-04-12 15:33,admin,admin
91,114292,3004,17094,3695,1,0,N,N,N,CP_Drtn,TT_Task,DT_FixedDUR2,RV_OK,TK_NotStart,V5-20,P.c footing,,144,0,40,0,0,0,40,0,0,0,,,,2013-03-19 08:00,2013-03-24 16:00,,2013-02-26 08:00,2013-03-03 16:00,2013-02-26 08:00,2013-03-03 16:00,2013-02-26 08:00,2013-03-03 16:00,,2013-03-19 08:00,2013-03-24 16:00,,PT_Normal,,,,,m3cYb/UWGUyEMB3XnfPXMw,txgFcPBLtEez+9echh225w,,,N,0,0,,,2012-04-12 15:32,2012-04-12 15:33,admin,admin
92,114293,3004,17094,3695,1,0,N,N,N,CP_Drtn,TT_Task,DT_FixedDUR2,RV_OK,TK_NotStart,V5-30,R.c concrete foundations,,144,24,96,0,0,0,96,0,0,0,,,,2013-03-25 08:00,2013-04-07 16:00,,2013-03-04 08:00,2013-03-17 16:00,2013-03-04 08:00,2013-03-17 16:00,2013-03-04 08:00,2013-03-17 16:00,,2013-03-25 08:00,2013-04-07 16:00,,PT_Normal,,,,,4vF3wPBX9kKJ4iyRsXw4Ww,gSUdU0cQqUKjtIq7n1SNrQ,,,N,0,0,,,2012-04-12 15:32,2012-04-12 15:33,admin,admin
93,114294,3004,17096,3695,1,0,N,N,N,CP_Drtn,TT_Task,DT_FixedDUR2,RV_OK,TK_NotStart,V5-40,Ground floor columns,,120,0,64,0,0,0,64,0,0,0,,,,2013-04-08 08:00,2013-04-16 16:00,,2013-03-21 08:00,2013-03-30 16:00,2013-03-21 08:00,2013-03-30 16:00,2013-03-21 08:00,2013-03-30 16:00,,2013-04-08 08:00,2013-04-16 16:00,,PT_Normal,,,,,NQo7S0SqkUW9M/v0IQg1lQ,7LKVqY2qTEO763+XR9cNJQ,,,N,0,0,,,2012-04-12 15:32,2012-04-12 15:33,admin,admin
94,114295,3004,17096,3695,1,0,N,N,N,CP_Drtn,TT_Task,DT_FixedDUR2,RV_OK,TK_NotStart,V5-50,Ground floor slab&beams&staircase,,0,0,120,0,0,0,120,0,0,0,,,,2013-05-01 08:00,2013-05-18 16:00,,2013-05-01 08:00,2013-05-18 16:00,2013-05-01 08:00,2013-05-18 16:00,2013-05-01 08:00,2013-05-18 16:00,,2013-05-01 08:00,2013-05-18 16:00,,PT_Normal,,,,,97MWcOW9/U+hJTypYQeqZg,dLfOymxDlUaXiuSJpwtcNQ,,,Y,0,0,,,2012-04-12 15:32,2012-04-12 15:33,admin,admin
95,114296,3004,17096,3695,1,0,N,N,N,CP_Drtn,TT_Task,DT_FixedDUR2,RV_OK,TK_NotStart,V5-60,First floor columns,,56,0,64,0,0,0,64,0,0,0,,,,2013-05-27 08:00,2013-06-04 16:00,,2013-05-19 08:00,2013-05-27 16:00,2013-05-19 08:00,2013-05-27 16:00,2013-05-19 08:00,2013-05-27 16:00,,2013-05-27 08:00,2013-06-04 16:00,,PT_Normal,,,,,6pCDP3JZOUy+oTNpTo7Zyg,eR0mfMY3i0emAEBXZTjMWw,,,N,0,0,,,2012-04-12 15:32,2012-04-12 15:33,admin,admin
96,114297,3004,17096,3695,1,0,N,N,N,CP_Drtn,TT_Task,DT_FixedDUR2,RV_OK,TK_NotStart,V5-70,First floor slab&beams&staircase,,0,0,120,0,0,0,120,0,0,0,,,,2013-06-05 08:00,2013-06-22 16:00,,2013-06-05 08:00,2013-06-22 16:00,2013-06-05 08:00,2013-06-22 16:00,2013-06-05 08:00,2013-06-22 16:00,,2013-06-05 08:00,2013-06-22 16:00,,PT_Normal,,,,,L+g8IGavJ06/z9ORkEFClQ,AeI85D3nlUK1fxi4bC7muQ,,,Y,0,0,,,2012-04-12 15:32,2012-04-12 15:33,admin,admin
97,114298,3004,17096,3695,1,0,N,N,N,CP_Drtn,TT_Task,DT_FixedDUR2,RV_OK,TK_NotStart,V5-80,Roof columns,,2856,0,40,0,0,0,40,0,0,0,,,,2014-08-30 08:00,2014-09-03 16:00,,2013-06-23 08:00,2013-06-27 16:00,2013-06-23 08:00,2013-06-27 16:00,2013-06-23 08:00,2013-06-27 16:00,,2014-08-30 08:00,2014-09-03 16:00,,PT_Normal,,,,,vGbbNYR8Q0ORGUhWpk8tZg,tpShnicnCkmx9f/6eY4Fbg,,,N,0,0,,,2012-04-12 15:32,2012-04-12 15:33,admin,admin
98,114299,3004,17096,3695,1,0,N,N,N,CP_Drtn,TT_Task,DT_FixedDUR2,RV_OK,TK_NotStart,V5-90,Roof slab,,2856,0,40,0,0,0,40,0,0,0,,,,2014-09-04 08:00,2014-09-09 16:00,,2013-06-29 08:00,2013-07-03 16:00,2013-06-29 08:00,2013-07-03 16:00,2013-06-29 08:00,2013-07-03 16:00,,2014-09-04 08:00,2014-09-09 16:00,,PT_Normal,,,,,dpZ2WgIC4UefgvgQob7iYA,V+5PoENo50ephyf0PP+Iuw,,,N,0,0,,,2012-04-12 15:32,2012-04-12 15:33,admin,admin
99,114300,3004,17097,3695,1,0,N,N,N,CP_Drtn,TT_Task,DT_FixedDUR2,RV_OK,TK_NotStart,V5-100,Masonry under slab on grade,,120,0,32,0,0,0,32,0,0,0,,,,2013-04-17 08:00,2013-04-21 16:00,,2013-03-31 08:00,2013-04-03 16:00,2013-03-31 08:00,2013-04-03 16:00,2013-03-31 08:00,2013-04-03 16:00,,2013-04-17 08:00,2013-04-21 16:00,,PT_Normal,,,,,wSomckESIUisWrGi6cXHQA,5lIDplAa+kGPjlEYpT1huA,,,N,0,0,,,2012-04-12 15:32,2012-04-12 15:33,admin,admin
100,114301,3004,17098,3695,1,0,N,N,N,CP_Drtn,TT_Task,DT_FixedDUR2,RV_OK,TK_NotStart,V5-110,Footings&masonry insulation,,120,0,32,0,0,0,32,0,0,0,,,,2013-04-22 08:00,2013-04-25 16:00,,2013-04-04 08:00,2013-04-08 16:00,2013-04-04 08:00,2013-04-08 16:00,2013-04-04 08:00,2013-04-08 16:00,,2013-04-22 08:00,2013-04-25 16:00,,PT_Normal,,,,,Hj1B9pZeRE6GZQ/2EwLkUg,w+RJ5czMzUGH4z3qbnQ4eg,,,N,0,0,,,2012-04-12 15:32,2012-04-12 15:33,admin,admin
101,114302,3004,17097,3695,1,0,N,N,N,CP_Drtn,TT_Task,DT_FixedDUR2,RV_OK,TK_NotStart,V5-120,Masonry works,,2480,0,160,0,0,0,160,0,0,0,,,,2014-07-23 08:00,2014-08-14 16:00,,2013-07-10 08:00,2013-08-01 16:00,2013-07-10 08:00,2013-08-01 16:00,2013-07-10 08:00,2013-08-01 16:00,,2014-07-23 08:00,2014-08-14 16:00,,PT_Normal,,,,,w0eVRf6MOEaTxcgVZ4N1cw,HHBcp2R/Fkismwd5WhipbA,,,N,0,0,,,2012-04-12 15:32,2012-04-12 15:33,admin,admin
102,114303,3004,17099,3695,1,0,N,N,N,CP_Drtn,TT_Task,DT_FixedDUR2,RV_OK,TK_NotStart,V5-130,External plaster works,,2480,0,168,0,0,0,168,0,0,0,,,,2014-08-16 08:00,2014-09-08 16:00,,2013-08-03 08:00,2013-09-04 16:00,2013-08-03 08:00,2013-09-04 16:00,2013-08-03 08:00,2013-09-04 16:00,,2014-08-16 08:00,2014-09-08 16:00,,PT_Normal,,,,,hq+fl8jrs0Kar5jldhWaCQ,2Tr7XXgrd0mnqw7/47VJlA,,,N,0,0,,,2012-04-12 15:32,2012-04-12 15:33,admin,admin
103,114304,3004,17100,3695,1,0,N,N,N,CP_Drtn,TT_Task,DT_FixedDUR2,RV_OK,TK_NotStart,V5-140,Flooring works,,2480,0,80,0,0,0,80,0,0,0,,,,2014-09-09 08:00,2014-09-20 16:00,,2013-09-05 08:00,2013-09-16 16:00,2013-09-05 08:00,2013-09-16 16:00,2013-09-05 08:00,2013-09-16 16:00,,2014-09-09 08:00,2014-09-20 16:00,,PT_Normal,,,,,Cf9Twkslc0G6tiXb/ZRFiw,/F5MGjgysUiNVa5iI640cw,,,N,0,0,,,2012-04-12 15:32,2012-04-12 15:33,admin,admin
104,114305,3004,17101,3695,1,0,N,N,N,CP_Drtn,TT_Task,DT_FixedDUR2,RV_OK,TK_NotStart,V5-150,External painting,,2480,0,80,0,0,0,80,0,0,0,,,,2014-09-21 08:00,2014-10-01 16:00,,2013-09-17 08:00,2013-09-28 16:00,2013-09-17 08:00,2013-09-28 16:00,2013-09-17 08:00,2013-09-28 16:00,,2014-09-21 08:00,2014-10-01 16:00,,PT_Normal,,,,,uAlbaJ2EDES6kvzmAaDQdA,QAI+3y4ozk2aSw8heajpYQ,,,N,0,0,,,2012-04-12 15:32,2012-04-12 15:33,admin,admin
105,114306,3004,17102,3695,1,0,N,N,N,CP_Drtn,TT_Task,DT_FixedDUR2,RV_OK,TK_NotStart,V5-160,Doors & windows erection,,2480,2480,80,0,0,0,80,0,0,0,,,,2014-10-02 08:00,2014-10-13 16:00,,2013-09-29 08:00,2013-10-09 16:00,2013-09-29 08:00,2013-10-09 16:00,2013-09-29 08:00,2013-10-09 16:00,,2014-10-02 08:00,2014-10-13 16:00,,PT_Normal,,,,,Q1pBTG1PBk2aUzO9t2wC0A,nNNkgbCXxEuPBrZThbcTxg,,,N,0,0,,,2012-04-12 15:32,2012-04-12 15:33,admin,admin
106,114307,3004,17103,3695,1,0,N,N,N,CP_Drtn,TT_Task,DT_FixedDUR2,RV_OK,TK_NotStart,V5-170,Mechanical & electrical works,,2808,2808,80,0,0,0,80,0,0,0,,,,2014-10-02 08:00,2014-10-13 16:00,,2013-08-03 08:00,2013-08-22 16:00,2013-08-03 08:00,2013-08-22 16:00,2013-08-03 08:00,2013-08-22 16:00,,2014-10-02 08:00,2014-10-13 16:00,,PT_Normal,,,,,xBjD8mY7xkKQqlaoNwN5QQ,/0sfhG/qdEya1NE3c18HpQ,,,N,0,0,,,2012-04-12 15:32,2012-04-12 15:33,admin,admin
107,114308,3004,17098,3695,1,0,N,N,N,CP_Drtn,TT_Task,DT_FixedDUR2,RV_OK,TK_NotStart,V5-180,Thermal insulation,,2856,0,56,0,0,0,56,0,0,0,,,,2014-09-24 08:00,2014-10-01 16:00,,2013-07-18 08:00,2013-07-25 16:00,2013-07-18 08:00,2013-07-25 16:00,2013-07-18 08:00,2013-07-25 16:00,,2014-09-24 08:00,2014-10-01 16:00,,PT_Normal,,,,,69vJMKHXeEu2wN+75cMFjA,X28e+kW4lEirSHFEs/hrwQ,,,N,0,0,,,2012-04-12 15:32,2012-04-12 15:33,admin,admin
108,114309,3004,17098,3695,1,0,N,N,N,CP_Drtn,TT_Task,DT_FixedDUR2,RV_OK,TK_NotStart,V5-190,Water proofing insulation,,2856,0,56,0,0,0,56,0,0,0,,,,2014-09-16 08:00,2014-09-23 16:00,,2013-07-10 08:00,2013-07-17 16:00,2013-07-10 08:00,2013-07-17 16:00,2013-07-10 08:00,2013-07-17 16:00,,2014-09-16 08:00,2014-09-23 16:00,,PT_Normal,,,,,+IPyc/g8M0i4Gnq6ESOlaQ,dyAtcbtqGUCzTx1owB/BVQ,,,N,0,0,,,2012-04-12 15:32,2012-04-12 15:33,admin,admin
109,114310,3004,17098,3695,1,0,N,N,N,CP_Drtn,TT_Task,DT_FixedDUR2,RV_OK,TK_NotStart,V5-200,Slopped concrete,,2856,0,40,0,0,0,40,0,0,0,,,,2014-09-10 08:00,2014-09-15 16:00,,2013-07-04 08:00,2013-07-09 16:00,2013-07-04 08:00,2013-07-09 16:00,2013-07-04 08:00,2013-07-09 16:00,,2014-09-10 08:00,2014-09-15 16:00,,PT_Normal,,,,,GupJ0AoIoEqE+jBxNMXW7g,gP0m+Jm+Ak2gLEl/NVfpXQ,,,N,0,0,,,2012-04-12 15:32,2012-04-12 15:33,admin,admin
110,114311,3004,17098,3695,1,0,N,N,N,CP_Drtn,TT_Task,DT_FixedDUR2,RV_OK,TK_NotStart,V5-210,Cement tiles,,2856,2856,80,0,0,0,80,0,0,0,,,,2014-10-02 08:00,2014-10-13 16:00,,2013-07-27 08:00,2013-08-06 16:00,2013-07-27 08:00,2013-08-06 16:00,2013-07-27 08:00,2013-08-06 16:00,,2014-10-02 08:00,2014-10-13 16:00,,PT_Normal,,,,,HODHKb5qX0uCTFRUSbr8jQ,9tqTS/kSqkemQmsi7lCQyQ,,,N,0,0,,,2012-04-12 15:32,2012-04-12 15:33,admin,admin
111,114312,3004,17096,3695,1,0,N,N,N,CP_Drtn,TT_Task,DT_FixedDUR2,RV_OK,TK_NotStart,V5-220,Slab on grade(R.C&P.C),,2560,80,40,0,0,0,40,0,0,0,,,,2014-07-17 08:00,2014-07-22 16:00,,2013-06-23 08:00,2013-06-27 16:00,2013-06-23 08:00,2013-06-27 16:00,2013-06-23 08:00,2013-06-27 16:00,,2014-07-17 08:00,2014-07-22 16:00,,PT_Normal,,,,,Fh07o7YSdUakmcIFeeBghw,U6aevI2hG0C0TGTKb9lZLg,,,N,0,0,,,2012-04-12 15:32,2012-04-12 15:33,admin,admin
112,114313,3004,17106,3695,1,0,N,N,N,CP_Drtn,TT_Task,DT_FixedDUR2,RV_OK,TK_NotStart,V6-10,Backfilling under slab on grade,,120,120,32,0,0,0,32,0,0,0,,,,2013-07-08 08:00,2013-07-11 16:00,,2013-06-20 08:00,2013-06-24 16:00,2013-06-20 08:00,2013-06-24 16:00,2013-06-20 08:00,2013-06-24 16:00,,2013-07-08 08:00,2013-07-11 16:00,,PT_Normal,,,,,3jftI5M7Eki3ruh6T1xdAA,vbekSQAWpEehMXoahewg0Q,,,N,0,0,,,2012-04-12 15:32,2012-04-12 15:33,admin,admin
113,114314,3004,17105,3695,1,0,N,N,N,CP_Drtn,TT_Task,DT_FixedDUR2,RV_OK,TK_NotStart,V6-20,P.c footing,,280,0,40,0,0,0,40,0,0,0,,,,2013-05-30 08:00,2013-06-04 16:00,,2013-04-20 08:00,2013-04-24 16:00,2013-04-20 08:00,2013-04-24 16:00,2013-04-20 08:00,2013-04-24 16:00,,2013-05-30 08:00,2013-06-04 16:00,,PT_Normal,,,,,VYoT43FrY0uLoIwGzd3hdw,m3cYb/UWGUyEMB3XnfPXMw,,,N,0,0,,,2012-04-12 15:32,2012-04-12 15:33,admin,admin
114,114315,3004,17105,3695,1,0,N,N,N,CP_Drtn,TT_Task,DT_FixedDUR2,RV_OK,TK_NotStart,V6-30,R.c concrete foundations,,280,160,96,0,0,0,96,0,0,0,,,,2013-06-05 08:00,2013-06-18 16:00,,2013-04-25 08:00,2013-05-08 16:00,2013-04-25 08:00,2013-05-08 16:00,2013-04-25 08:00,2013-05-08 16:00,,2013-06-05 08:00,2013-06-18 16:00,,PT_Normal,,,,,5gVvOD6bw06LfpFQ78K3Yw,4vF3wPBX9kKJ4iyRsXw4Ww,,,N,0,0,,,2012-04-12 15:32,2012-04-12 15:33,admin,admin
115,114316,3004,17107,3695,1,0,N,N,N,CP_Drtn,TT_Task,DT_FixedDUR2,RV_OK,TK_NotStart,V6-40,Ground floor columns,,120,0,64,0,0,0,64,0,0,0,,,,2013-06-19 08:00,2013-06-27 16:00,,2013-06-02 08:00,2013-06-10 16:00,2013-06-02 08:00,2013-06-10 16:00,2013-06-02 08:00,2013-06-10 16:00,,2013-06-19 08:00,2013-06-27 16:00,,PT_Normal,,,,,BRmm6Q0jBkO1jXZcru+H8g,NQo7S0SqkUW9M/v0IQg1lQ,,,N,0,0,,,2012-04-12 15:32,2012-04-12 15:33,admin,admin
116,114317,3004,17107,3695,1,0,N,N,N,CP_Drtn,TT_Task,DT_FixedDUR2,RV_OK,TK_NotStart,V6-50,Ground floor slab&beams&staircase,,0,0,120,0,0,0,120,0,0,0,,,,2013-07-13 08:00,2013-07-29 16:00,,2013-07-13 08:00,2013-07-29 16:00,2013-07-13 08:00,2013-07-29 16:00,2013-07-13 08:00,2013-07-29 16:00,,2013-07-13 08:00,2013-07-29 16:00,,PT_Normal,,,,,okvdz+UIYU++yx1gNE/Z6g,97MWcOW9/U+hJTypYQeqZg,,,Y,0,0,,,2012-04-12 15:32,2012-04-12 15:33,admin,admin
117,114318,3004,17107,3695,1,0,N,N,N,CP_Drtn,TT_Task,DT_FixedDUR2,RV_OK,TK_NotStart,V6-60,First floor columns,,56,0,64,0,0,0,64,0,0,0,,,,2013-08-17 08:00,2013-08-25 16:00,,2013-07-30 08:00,2013-08-17 16:00,2013-07-30 08:00,2013-08-17 16:00,2013-07-30 08:00,2013-08-17 16:00,,2013-08-17 08:00,2013-08-25 16:00,,PT_Normal,,,,,YKjeeV7i5k6PREJtQLZnrQ,6pCDP3JZOUy+oTNpTo7Zyg,,,N,0,0,,,2012-04-12 15:32,2012-04-12 15:33,admin,admin
118,114319,3004,17107,3695,1,0,N,N,N,CP_Drtn,TT_Task,DT_FixedDUR2,RV_OK,TK_NotStart,V6-70,First floor slab&beams&staircase,,0,0,120,0,0,0,120,0,0,0,,,,2013-08-26 08:00,2013-09-11 16:00,,2013-08-26 08:00,2013-09-11 16:00,2013-08-26 08:00,2013-09-11 16:00,2013-08-26 08:00,2013-09-11 16:00,,2013-08-26 08:00,2013-09-11 16:00,,PT_Normal,,,,,Mf4/gYTUbUKokjIR0Ri5cw,L+g8IGavJ06/z9ORkEFClQ,,,Y,0,0,,,2012-04-12 15:32,2012-04-12 15:33,admin,admin
119,114320,3004,17107,3695,1,0,N,N,N,CP_Drtn,TT_Task,DT_FixedDUR2,RV_OK,TK_NotStart,V6-80,Roof columns,,2360,0,40,0,0,0,40,0,0,0,,,,2014-08-30 08:00,2014-09-03 16:00,,2013-09-12 08:00,2013-09-17 16:00,2013-09-12 08:00,2013-09-17 16:00,2013-09-12 08:00,2013-09-17 16:00,,2014-08-30 08:00,2014-09-03 16:00,,PT_Normal,,,,,rqTLZSEqukqGlmBnWfy6kg,vGbbNYR8Q0ORGUhWpk8tZg,,,N,0,0,,,2012-04-12 15:32,2012-04-12 15:33,admin,admin
120,114321,3004,17107,3695,1,0,N,N,N,CP_Drtn,TT_Task,DT_FixedDUR2,RV_OK,TK_NotStart,V6-90,Roof slab,,2360,0,40,0,0,0,40,0,0,0,,,,2014-09-04 08:00,2014-09-09 16:00,,2013-09-18 08:00,2013-09-23 16:00,2013-09-18 08:00,2013-09-23 16:00,2013-09-18 08:00,2013-09-23 16:00,,2014-09-04 08:00,2014-09-09 16:00,,PT_Normal,,,,,C10i0VpcUkimETW89lRFmA,dpZ2WgIC4UefgvgQob7iYA,,,N,0,0,,,2012-04-12 15:32,2012-04-12 15:33,admin,admin
121,114322,3004,17108,3695,1,0,N,N,N,CP_Drtn,TT_Task,DT_FixedDUR2,RV_OK,TK_NotStart,V6-100,Masonry under slab on grade,,120,0,32,0,0,0,32,0,0,0,,,,2013-06-29 08:00,2013-07-02 16:00,,2013-06-11 08:00,2013-06-15 16:00,2013-06-11 08:00,2013-06-15 16:00,2013-06-11 08:00,2013-06-15 16:00,,2013-06-29 08:00,2013-07-02 16:00,,PT_Normal,,,,,PdLHTT7lg0CVokRF+HYpLw,wSomckESIUisWrGi6cXHQA,,,N,0,0,,,2012-04-12 15:32,2012-04-12 15:33,admin,admin
122,114323,3004,17109,3695,1,0,N,N,N,CP_Drtn,TT_Task,DT_FixedDUR2,RV_OK,TK_NotStart,V6-110,Footings&masonry insulation,,120,0,32,0,0,0,32,0,0,0,,,,2013-07-03 08:00,2013-07-07 16:00,,2013-06-16 08:00,2013-06-19 16:00,2013-06-16 08:00,2013-06-19 16:00,2013-06-16 08:00,2013-06-19 16:00,,2013-07-03 08:00,2013-07-07 16:00,,PT_Normal,,,,,OILneVyvHkGsfDBWusWVfQ,Hj1B9pZeRE6GZQ/2EwLkUg,,,N,0,0,,,2012-04-12 15:32,2012-04-12 15:33,admin,admin
123,114324,3004,17108,3695,1,0,N,N,N,CP_Drtn,TT_Task,DT_FixedDUR2,RV_OK,TK_NotStart,V6-120,Masonry works,,1984,0,160,0,0,0,160,0,0,0,,,,2014-07-23 08:00,2014-08-14 16:00,,2013-09-30 08:00,2013-10-29 16:00,2013-09-30 08:00,2013-10-29 16:00,2013-09-30 08:00,2013-10-29 16:00,,2014-07-23 08:00,2014-08-14 16:00,,PT_Normal,,,,,xr1Gr5i+UU6QlqS1TJj5qg,w0eVRf6MOEaTxcgVZ4N1cw,,,N,0,0,,,2012-04-12 15:32,2012-04-12 15:33,admin,admin
124,114325,3004,17110,3695,1,0,N,N,N,CP_Drtn,TT_Task,DT_FixedDUR2,RV_OK,TK_NotStart,V6-130,External plaster works,,1984,0,168,0,0,0,168,0,0,0,,,,2014-08-16 08:00,2014-09-08 16:00,,2013-10-30 08:00,2013-11-23 16:00,2013-10-30 08:00,2013-11-23 16:00,2013-10-30 08:00,2013-11-23 16:00,,2014-08-16 08:00,2014-09-08 16:00,,PT_Normal,,,,,z7PlIVlo7Uq5X/5Hpo9nhg,hq+fl8jrs0Kar5jldhWaCQ,,,N,0,0,,,2012-04-12 15:32,2012-04-12 15:33,admin,admin
125,114326,3004,17111,3695,1,0,N,N,N,CP_Drtn,TT_Task,DT_FixedDUR2,RV_OK,TK_NotStart,V6-140,Flooring works,,1984,0,80,0,0,0,80,0,0,0,,,,2014-09-09 08:00,2014-09-20 16:00,,2013-11-24 08:00,2013-12-04 16:00,2013-11-24 08:00,2013-12-04 16:00,2013-11-24 08:00,2013-12-04 16:00,,2014-09-09 08:00,2014-09-20 16:00,,PT_Normal,,,,,a4dCdC2x7kqtkr88XVSxEA,Cf9Twkslc0G6tiXb/ZRFiw,,,N,0,0,,,2012-04-12 15:32,2012-04-12 15:33,admin,admin
126,114327,3004,17112,3695,1,0,N,N,N,CP_Drtn,TT_Task,DT_FixedDUR2,RV_OK,TK_NotStart,V6-150,External painting,,1984,0,80,0,0,0,80,0,0,0,,,,2014-09-21 08:00,2014-10-01 16:00,,2013-12-05 08:00,2013-12-16 16:00,2013-12-05 08:00,2013-12-16 16:00,2013-12-05 08:00,2013-12-16 16:00,,2014-09-21 08:00,2014-10-01 16:00,,PT_Normal,,,,,pyr7/N1DykO5cro+/DIqWQ,uAlbaJ2EDES6kvzmAaDQdA,,,N,0,0,,,2012-04-12 15:32,2012-04-12 15:33,admin,admin
127,114328,3004,17113,3695,1,0,N,N,N,CP_Drtn,TT_Task,DT_FixedDUR2,RV_OK,TK_NotStart,V6-160,Doors & windows erection,,1984,1984,80,0,0,0,80,0,0,0,,,,2014-10-02 08:00,2014-10-13 16:00,,2013-12-17 08:00,2013-12-28 16:00,2013-12-17 08:00,2013-12-28 16:00,2013-12-17 08:00,2013-12-28 16:00,,2014-10-02 08:00,2014-10-13 16:00,,PT_Normal,,,,,10gaIoN8RUeGwdQo7w9Zjg,Q1pBTG1PBk2aUzO9t2wC0A,,,N,0,0,,,2012-04-12 15:32,2012-04-12 15:33,admin,admin
128,114329,3004,17114,3695,1,0,N,N,N,CP_Drtn,TT_Task,DT_FixedDUR2,RV_OK,TK_NotStart,V6-170,Mechanical & electrical works,,2312,2312,80,0,0,0,80,0,0,0,,,,2014-10-02 08:00,2014-10-13 16:00,,2013-10-30 08:00,2013-11-10 16:00,2013-10-30 08:00,2013-11-10 16:00,2013-10-30 08:00,2013-11-10 16:00,,2014-10-02 08:00,2014-10-13 16:00,,PT_Normal,,,,,MgVABHZJHEaBwBcrSPTq4w,xBjD8mY7xkKQqlaoNwN5QQ,,,N,0,0,,,2012-04-12 15:32,2012-04-12 15:33,admin,admin
129,114330,3004,17109,3695,1,0,N,N,N,CP_Drtn,TT_Task,DT_FixedDUR2,RV_OK,TK_NotStart,V6-180,Thermal insulation,,2360,0,56,0,0,0,56,0,0,0,,,,2014-09-24 08:00,2014-10-01 16:00,,2013-10-08 08:00,2013-10-22 16:00,2013-10-08 08:00,2013-10-22 16:00,2013-10-08 08:00,2013-10-22 16:00,,2014-09-24 08:00,2014-10-01 16:00,,PT_Normal,,,,,eM3/FBnWlUGD345CihJWvw,69vJMKHXeEu2wN+75cMFjA,,,N,0,0,,,2012-04-12 15:32,2012-04-12 15:33,admin,admin
130,114331,3004,17109,3695,1,0,N,N,N,CP_Drtn,TT_Task,DT_FixedDUR2,RV_OK,TK_NotStart,V6-190,Water proofing insulation,,2360,0,56,0,0,0,56,0,0,0,,,,2014-09-16 08:00,2014-09-23 16:00,,2013-09-30 08:00,2013-10-07 16:00,2013-09-30 08:00,2013-10-07 16:00,2013-09-30 08:00,2013-10-07 16:00,,2014-09-16 08:00,2014-09-23 16:00,,PT_Normal,,,,,YDjtXS17AUaNIl4QGbaEMw,+IPyc/g8M0i4Gnq6ESOlaQ,,,N,0,0,,,2012-04-12 15:32,2012-04-12 15:33,admin,admin
131,114332,3004,17109,3695,1,0,N,N,N,CP_Drtn,TT_Task,DT_FixedDUR2,RV_OK,TK_NotStart,V6-200,Slopped concrete,,2360,0,40,0,0,0,40,0,0,0,,,,2014-09-10 08:00,2014-09-15 16:00,,2013-09-24 08:00,2013-09-29 16:00,2013-09-24 08:00,2013-09-29 16:00,2013-09-24 08:00,2013-09-29 16:00,,2014-09-10 08:00,2014-09-15 16:00,,PT_Normal,,,,,IgfXayNAn0unMHyzxhBvyw,GupJ0AoIoEqE+jBxNMXW7g,,,N,0,0,,,2012-04-12 15:32,2012-04-12 15:33,admin,admin
132,114333,3004,17109,3695,1,0,N,N,N,CP_Drtn,TT_Task,DT_FixedDUR2,RV_OK,TK_NotStart,V6-210,Cement tiles,,2360,2360,80,0,0,0,80,0,0,0,,,,2014-10-02 08:00,2014-10-13 16:00,,2013-10-23 08:00,2013-11-03 16:00,2013-10-23 08:00,2013-11-03 16:00,2013-10-23 08:00,2013-11-03 16:00,,2014-10-02 08:00,2014-10-13 16:00,,PT_Normal,,,,,xr1zKaclLkmq41588+4UDA,HODHKb5qX0uCTFRUSbr8jQ,,,N,0,0,,,2012-04-12 15:32,2012-04-12 15:33,admin,admin
133,114334,3004,17107,3695,1,0,N,N,N,CP_Drtn,TT_Task,DT_FixedDUR2,RV_OK,TK_NotStart,V6-220,Slab on grade(R.C&P.C),,2064,80,40,0,0,0,40,0,0,0,,,,2014-07-17 08:00,2014-07-22 16:00,,2013-09-12 08:00,2013-09-17 16:00,2013-09-12 08:00,2013-09-17 16:00,2013-09-12 08:00,2013-09-17 16:00,,2014-07-17 08:00,2014-07-22 16:00,,PT_Normal,,,,,Xrp8e1Pfz0mjd2q3LBwSQw,Fh07o7YSdUakmcIFeeBghw,,,N,0,0,,,2012-04-12 15:32,2012-04-12 15:33,admin,admin
134,114335,3004,17117,3695,1,0,N,N,N,CP_Drtn,TT_Task,DT_FixedDUR2,RV_OK,TK_NotStart,V7-60,Backfilling under slab on grade,,120,120,32,0,0,0,32,0,0,0,,,,2013-09-28 08:00,2013-10-01 16:00,,2013-09-10 08:00,2013-09-14 16:00,2013-09-10 08:00,2013-09-14 16:00,2013-09-10 08:00,2013-09-14 16:00,,2013-09-28 08:00,2013-10-01 16:00,,PT_Normal,,,,,4apNus5i10GIP3LjzE1iSQ,vbekSQAWpEehMXoahewg0Q,,,N,0,0,,,2012-04-12 15:32,2012-04-12 15:33,admin,admin
135,114336,3004,17116,3695,1,0,N,N,N,CP_Drtn,TT_Task,DT_FixedDUR2,RV_OK,TK_NotStart,V7-10,P.c footing,,136,0,40,0,0,0,40,0,0,0,,,,2013-08-20 08:00,2013-08-25 16:00,,2013-07-22 08:00,2013-07-27 16:00,2013-07-22 08:00,2013-07-27 16:00,2013-07-22 08:00,2013-07-27 16:00,,2013-08-20 08:00,2013-08-25 16:00,,PT_Normal,,,,,S1r5c3Yc+U+pr5A09nJqqw,m3cYb/UWGUyEMB3XnfPXMw,,,N,0,0,,,2012-04-12 15:32,2012-04-12 15:33,admin,admin
136,114337,3004,17116,3695,1,0,N,N,N,CP_Drtn,TT_Task,DT_FixedDUR2,RV_OK,TK_NotStart,V7-20,R.c concrete foundations,,136,16,96,0,0,0,96,0,0,0,,,,2013-08-26 08:00,2013-09-08 16:00,,2013-07-28 08:00,2013-08-19 16:00,2013-07-28 08:00,2013-08-19 16:00,2013-07-28 08:00,2013-08-19 16:00,,2013-08-26 08:00,2013-09-08 16:00,,PT_Normal,,,,,X7qkwHLUdEWP/SGIf2V98A,4vF3wPBX9kKJ4iyRsXw4Ww,,,N,0,0,,,2012-04-12 15:32,2012-04-12 15:33,admin,admin
137,114338,3004,17118,3695,1,0,N,N,N,CP_Drtn,TT_Task,DT_FixedDUR2,RV_OK,TK_NotStart,V7-30,Ground floor columns,,120,0,64,0,0,0,64,0,0,0,,,,2013-09-09 08:00,2013-09-17 16:00,,2013-08-22 08:00,2013-08-31 16:00,2013-08-22 08:00,2013-08-31 16:00,2013-08-22 08:00,2013-08-31 16:00,,2013-09-09 08:00,2013-09-17 16:00,,PT_Normal,,,,,P8055+JDQkOn/EIl2gLJiA,NQo7S0SqkUW9M/v0IQg1lQ,,,N,0,0,,,2012-04-12 15:32,2012-04-12 15:33,admin,admin
138,114339,3004,17118,3695,1,0,N,N,N,CP_Drtn,TT_Task,DT_FixedDUR2,RV_OK,TK_NotStart,V7-70,Ground floor slab&beams&staircase,,0,0,120,0,0,0,120,0,0,0,,,,2013-10-02 08:00,2013-10-26 16:00,,2013-10-02 08:00,2013-10-26 16:00,2013-10-02 08:00,2013-10-26 16:00,2013-10-02 08:00,2013-10-26 16:00,,2013-10-02 08:00,2013-10-26 16:00,,PT_Normal,,,,,35e31Zl5Q0GlUkBNR03KUA,97MWcOW9/U+hJTypYQeqZg,,,Y,0,0,,,2012-04-12 15:32,2012-04-12 15:33,admin,admin
139,114340,3004,17118,3695,1,0,N,N,N,CP_Drtn,TT_Task,DT_FixedDUR2,RV_OK,TK_NotStart,V7-80,First floor columns,,56,0,64,0,0,0,64,0,0,0,,,,2013-11-04 08:00,2013-11-12 16:00,,2013-10-27 08:00,2013-11-04 16:00,2013-10-27 08:00,2013-11-04 16:00,2013-10-27 08:00,2013-11-04 16:00,,2013-11-04 08:00,2013-11-12 16:00,,PT_Normal,,,,,hzoBKdk+Q0yYGq9q/w9lEw,6pCDP3JZOUy+oTNpTo7Zyg,,,N,0,0,,,2012-04-12 15:32,2012-04-12 15:33,admin,admin
140,114341,3004,17118,3695,1,0,N,N,N,CP_Drtn,TT_Task,DT_FixedDUR2,RV_OK,TK_NotStart,V7-90,First floor slab&beams&staircase,,0,0,120,0,0,0,120,0,0,0,,,,2013-11-13 08:00,2013-11-30 16:00,,2013-11-13 08:00,2013-11-30 16:00,2013-11-13 08:00,2013-11-30 16:00,2013-11-13 08:00,2013-11-30 16:00,,2013-11-13 08:00,2013-11-30 16:00,,PT_Normal,,,,,xIImiHkdzkiviwRaTraNFw,L+g8IGavJ06/z9ORkEFClQ,,,Y,0,0,,,2012-04-12 15:32,2012-04-12 15:33,admin,admin
141,114342,3004,17118,3695,1,0,N,N,N,CP_Drtn,TT_Task,DT_FixedDUR2,RV_OK,TK_NotStart,V7-100,Roof columns,,1864,0,40,0,0,0,40,0,0,0,,,,2014-08-30 08:00,2014-09-03 16:00,,2013-12-01 08:00,2013-12-05 16:00,2013-12-01 08:00,2013-12-05 16:00,2013-12-01 08:00,2013-12-05 16:00,,2014-08-30 08:00,2014-09-03 16:00,,PT_Normal,,,,,82bTOh/R40KaPg/kygq2jw,vGbbNYR8Q0ORGUhWpk8tZg,,,N,0,0,,,2012-04-12 15:32,2012-04-12 15:33,admin,admin
142,114343,3004,17118,3695,1,0,N,N,N,CP_Drtn,TT_Task,DT_FixedDUR2,RV_OK,TK_NotStart,V7-120,Roof slab,,1864,0,40,0,0,0,40,0,0,0,,,,2014-09-04 08:00,2014-09-09 16:00,,2013-12-07 08:00,2013-12-11 16:00,2013-12-07 08:00,2013-12-11 16:00,2013-12-07 08:00,2013-12-11 16:00,,2014-09-04 08:00,2014-09-09 16:00,,PT_Normal,,,,,MxlC1yOHLUGZzmlsswsK7A,dpZ2WgIC4UefgvgQob7iYA,,,N,0,0,,,2012-04-12 15:32,2012-04-12 15:33,admin,admin
143,114344,3004,17119,3695,1,0,N,N,N,CP_Drtn,TT_Task,DT_FixedDUR2,RV_OK,TK_NotStart,V7-40,Masonry under slab on grade,,120,0,32,0,0,0,32,0,0,0,,,,2013-09-18 08:00,2013-09-22 16:00,,2013-09-01 08:00,2013-09-04 16:00,2013-09-01 08:00,2013-09-04 16:00,2013-09-01 08:00,2013-09-04 16:00,,2013-09-18 08:00,2013-09-22 16:00,,PT_Normal,,,,,f5h+Z6nDcUC0PpK76Pn5/A,wSomckESIUisWrGi6cXHQA,,,N,0,0,,,2012-04-12 15:32,2012-04-12 15:33,admin,admin
144,114345,3004,17120,3695,1,0,N,N,N,CP_Drtn,TT_Task,DT_FixedDUR2,RV_OK,TK_NotStart,V7-50,Footings&masonry insulation,,120,0,32,0,0,0,32,0,0,0,,,,2013-09-23 08:00,2013-09-26 16:00,,2013-09-05 08:00,2013-09-09 16:00,2013-09-05 08:00,2013-09-09 16:00,2013-09-05 08:00,2013-09-09 16:00,,2013-09-23 08:00,2013-09-26 16:00,,PT_Normal,,,,,0z+CLipGyUmQHYQyvgaTTA,Hj1B9pZeRE6GZQ/2EwLkUg,,,N,0,0,,,2012-04-12 15:32,2012-04-12 15:33,admin,admin
145,114346,3004,17119,3695,1,0,N,N,N,CP_Drtn,TT_Task,DT_FixedDUR2,RV_OK,TK_NotStart,V7-140,Masonry works,,1488,0,160,0,0,0,160,0,0,0,,,,2014-07-23 08:00,2014-08-14 16:00,,2013-12-18 08:00,2014-01-09 16:00,2013-12-18 08:00,2014-01-09 16:00,2013-12-18 08:00,2014-01-09 16:00,,2014-07-23 08:00,2014-08-14 16:00,,PT_Normal,,,,,+dBsEqjUlU2fhYTghwQhRQ,w0eVRf6MOEaTxcgVZ4N1cw,,,N,0,0,,,2012-04-12 15:32,2012-04-12 15:33,admin,admin
146,114347,3004,17121,3695,1,0,N,N,N,CP_Drtn,TT_Task,DT_FixedDUR2,RV_OK,TK_NotStart,V7-180,External plaster works,,1488,0,168,0,0,0,168,0,0,0,,,,2014-08-16 08:00,2014-09-08 16:00,,2014-01-11 08:00,2014-02-03 16:00,2014-01-11 08:00,2014-02-03 16:00,2014-01-11 08:00,2014-02-03 16:00,,2014-08-16 08:00,2014-09-08 16:00,,PT_Normal,,,,,7Rz4p4At2USRMKLJNWmd4A,hq+fl8jrs0Kar5jldhWaCQ,,,N,0,0,,,2012-04-12 15:32,2012-04-12 15:33,admin,admin
147,114348,3004,17122,3695,1,0,N,N,N,CP_Drtn,TT_Task,DT_FixedDUR2,RV_OK,TK_NotStart,V7-200,Flooring works,,1488,0,80,0,0,0,80,0,0,0,,,,2014-09-09 08:00,2014-09-20 16:00,,2014-02-04 08:00,2014-02-15 16:00,2014-02-04 08:00,2014-02-15 16:00,2014-02-04 08:00,2014-02-15 16:00,,2014-09-09 08:00,2014-09-20 16:00,,PT_Normal,,,,,E6WV/PnBm0maPfWO6hcZxA,Cf9Twkslc0G6tiXb/ZRFiw,,,N,0,0,,,2012-04-12 15:32,2012-04-12 15:33,admin,admin
148,114349,3004,17123,3695,1,0,N,N,N,CP_Drtn,TT_Task,DT_FixedDUR2,RV_OK,TK_NotStart,V7-210,External painting,,1488,0,80,0,0,0,80,0,0,0,,,,2014-09-21 08:00,2014-10-01 16:00,,2014-02-16 08:00,2014-02-26 16:00,2014-02-16 08:00,2014-02-26 16:00,2014-02-16 08:00,2014-02-26 16:00,,2014-09-21 08:00,2014-10-01 16:00,,PT_Normal,,,,,HmJdVI/rq0WhW1PI9Jqw0w,uAlbaJ2EDES6kvzmAaDQdA,,,N,0,0,,,2012-04-12 15:32,2012-04-12 15:33,admin,admin
149,114350,3004,17124,3695,1,0,N,N,N,CP_Drtn,TT_Task,DT_FixedDUR2,RV_OK,TK_NotStart,V7-220,Doors & windows erection,,1488,1488,80,0,0,0,80,0,0,0,,,,2014-10-02 08:00,2014-10-13 16:00,,2014-02-27 08:00,2014-03-10 16:00,2014-02-27 08:00,2014-03-10 16:00,2014-02-27 08:00,2014-03-10 16:00,,2014-10-02 08:00,2014-10-13 16:00,,PT_Normal,,,,,Fx/dzQ4J8E+NyzmW3XuSYA,Q1pBTG1PBk2aUzO9t2wC0A,,,N,0,0,,,2012-04-12 15:32,2012-04-12 15:33,admin,admin
150,114351,3004,17125,3695,1,0,N,N,N,CP_Drtn,TT_Task,DT_FixedDUR2,RV_OK,TK_NotStart,V7-190,Mechanical & electrical works,,1816,1816,80,0,0,0,80,0,0,0,,,,2014-10-02 08:00,2014-10-13 16:00,,2014-01-11 08:00,2014-01-21 16:00,2014-01-11 08:00,2014-01-21 16:00,2014-01-11 08:00,2014-01-21 16:00,,2014-10-02 08:00,2014-10-13 16:00,,PT_Normal,,,,,aFP6WuvRXEWXqA7RW/HOxg,xBjD8mY7xkKQqlaoNwN5QQ,,,N,0,0,,,2012-04-12 15:32,2012-04-12 15:33,admin,admin
151,114352,3004,17120,3695,1,0,N,N,N,CP_Drtn,TT_Task,DT_FixedDUR2,RV_OK,TK_NotStart,V7-160,Thermal insulation,,1864,0,56,0,0,0,56,0,0,0,,,,2014-09-24 08:00,2014-10-01 16:00,,2013-12-26 08:00,2014-01-02 16:00,2013-12-26 08:00,2014-01-02 16:00,2013-12-26 08:00,2014-01-02 16:00,,2014-09-24 08:00,2014-10-01 16:00,,PT_Normal,,,,,DCS+Yzdork6xdWZeC4RLOg,69vJMKHXeEu2wN+75cMFjA,,,N,0,0,,,2012-04-12 15:32,2012-04-12 15:33,admin,admin
152,114353,3004,17120,3695,1,0,N,N,N,CP_Drtn,TT_Task,DT_FixedDUR2,RV_OK,TK_NotStart,V7-150,Water proofing insulation,,1864,0,56,0,0,0,56,0,0,0,,,,2014-09-16 08:00,2014-09-23 16:00,,2013-12-18 08:00,2013-12-25 16:00,2013-12-18 08:00,2013-12-25 16:00,2013-12-18 08:00,2013-12-25 16:00,,2014-09-16 08:00,2014-09-23 16:00,,PT_Normal,,,,,E/+1oW6gj0KvujstfyD+jA,+IPyc/g8M0i4Gnq6ESOlaQ,,,N,0,0,,,2012-04-12 15:32,2012-04-12 15:33,admin,admin
153,114354,3004,17120,3695,1,0,N,N,N,CP_Drtn,TT_Task,DT_FixedDUR2,RV_OK,TK_NotStart,V7-130,Slopped concrete,,1864,0,40,0,0,0,40,0,0,0,,,,2014-09-10 08:00,2014-09-15 16:00,,2013-12-12 08:00,2013-12-17 16:00,2013-12-12 08:00,2013-12-17 16:00,2013-12-12 08:00,2013-12-17 16:00,,2014-09-10 08:00,2014-09-15 16:00,,PT_Normal,,,,,sxUTCjMrYUWCkWhTWoZs2w,GupJ0AoIoEqE+jBxNMXW7g,,,N,0,0,,,2012-04-12 15:32,2012-04-12 15:33,admin,admin
154,114355,3004,17120,3695,1,0,N,N,N,CP_Drtn,TT_Task,DT_FixedDUR2,RV_OK,TK_NotStart,V7-170,Cement tiles,,1864,1864,80,0,0,0,80,0,0,0,,,,2014-10-02 08:00,2014-10-13 16:00,,2014-01-04 08:00,2014-01-14 16:00,2014-01-04 08:00,2014-01-14 16:00,2014-01-04 08:00,2014-01-14 16:00,,2014-10-02 08:00,2014-10-13 16:00,,PT_Normal,,,,,IiU5/QMZJECBPBA7jpxQIg,HODHKb5qX0uCTFRUSbr8jQ,,,N,0,0,,,2012-04-12 15:32,2012-04-12 15:33,admin,admin
155,114356,3004,17118,3695,1,0,N,N,N,CP_Drtn,TT_Task,DT_FixedDUR2,RV_OK,TK_NotStart,V7-110,Slab on grade(R.C&P.C),,1568,80,40,0,0,0,40,0,0,0,,,,2014-07-17 08:00,2014-07-22 16:00,,2013-12-01 08:00,2013-12-05 16:00,2013-12-01 08:00,2013-12-05 16:00,2013-12-01 08:00,2013-12-05 16:00,,2014-07-17 08:00,2014-07-22 16:00,,PT_Normal,,,,,7RcDWDx3KUa3oAz1O8EARw,Fh07o7YSdUakmcIFeeBghw,,,N,0,0,,,2012-04-12 15:32,2012-04-12 15:33,admin,admin
156,114357,3004,17128,3695,1,0,N,N,N,CP_Drtn,TT_Task,DT_FixedDUR2,RV_OK,TK_NotStart,V8-60,Backfilling under slab on grade,,120,120,32,0,0,0,32,0,0,0,,,,2013-12-16 08:00,2013-12-19 16:00,,2013-11-28 08:00,2013-12-02 16:00,2013-11-28 08:00,2013-12-02 16:00,2013-11-28 08:00,2013-12-02 16:00,,2013-12-16 08:00,2013-12-19 16:00,,PT_Normal,,,,,ao7Ziy2ZRUWdxNXCHk/cIg,4apNus5i10GIP3LjzE1iSQ,,,N,0,0,,,2012-04-12 15:32,2012-04-12 15:33,admin,admin
157,114358,3004,17127,3695,1,0,N,N,N,CP_Drtn,TT_Task,DT_FixedDUR2,RV_OK,TK_NotStart,V8-10,P.c footing,,152,0,40,0,0,0,40,0,0,0,,,,2013-11-07 08:00,2013-11-12 16:00,,2013-10-09 08:00,2013-10-21 16:00,2013-10-09 08:00,2013-10-21 16:00,2013-10-09 08:00,2013-10-21 16:00,,2013-11-07 08:00,2013-11-12 16:00,,PT_Normal,,,,,n6BKXNbQEEmo7syrVLMs6A,S1r5c3Yc+U+pr5A09nJqqw,,,N,0,0,,,2012-04-12 15:32,2012-04-12 15:33,admin,admin
158,114359,3004,17127,3695,1,0,N,N,N,CP_Drtn,TT_Task,DT_FixedDUR2,RV_OK,TK_NotStart,V8-20,R.c concrete foundations,,152,32,96,0,0,0,96,0,0,0,,,,2013-11-13 08:00,2013-11-26 16:00,,2013-10-22 08:00,2013-11-04 16:00,2013-10-22 08:00,2013-11-04 16:00,2013-10-22 08:00,2013-11-04 16:00,,2013-11-13 08:00,2013-11-26 16:00,,PT_Normal,,,,,tWYbbyMWskWYEltMGV8voA,X7qkwHLUdEWP/SGIf2V98A,,,N,0,0,,,2012-04-12 15:32,2012-04-12 15:33,admin,admin
159,114360,3004,17129,3695,1,0,N,N,N,CP_Drtn,TT_Task,DT_FixedDUR2,RV_OK,TK_NotStart,V8-30,Ground floor columns,,120,0,64,0,0,0,64,0,0,0,,,,2013-11-27 08:00,2013-12-05 16:00,,2013-11-10 08:00,2013-11-18 16:00,2013-11-10 08:00,2013-11-18 16:00,2013-11-10 08:00,2013-11-18 16:00,,2013-11-27 08:00,2013-12-05 16:00,,PT_Normal,,,,,Ny2h72Mp0E+rBDsgMRNw7w,P8055+JDQkOn/EIl2gLJiA,,,N,0,0,,,2012-04-12 15:32,2012-04-12 15:33,admin,admin
160,114361,3004,17129,3695,1,0,N,N,N,CP_Drtn,TT_Task,DT_FixedDUR2,RV_OK,TK_NotStart,V8-70,Ground floor slab&beams&staircase,,0,0,120,0,0,0,120,0,0,0,,,,2013-12-21 08:00,2014-01-06 16:00,,2013-12-21 08:00,2014-01-06 16:00,2013-12-21 08:00,2014-01-06 16:00,2013-12-21 08:00,2014-01-06 16:00,,2013-12-21 08:00,2014-01-06 16:00,,PT_Normal,,,,,mkRfZkX0QkSrhCyImtJjkg,35e31Zl5Q0GlUkBNR03KUA,,,Y,0,0,,,2012-04-12 15:32,2012-04-12 15:33,admin,admin
161,114362,3004,17129,3695,1,0,N,N,N,CP_Drtn,TT_Task,DT_FixedDUR2,RV_OK,TK_NotStart,V8-80,First floor columns,,56,0,64,0,0,0,64,0,0,0,,,,2014-01-15 08:00,2014-01-23 16:00,,2014-01-07 08:00,2014-01-15 16:00,2014-01-07 08:00,2014-01-15 16:00,2014-01-07 08:00,2014-01-15 16:00,,2014-01-15 08:00,2014-01-23 16:00,,PT_Normal,,,,,DPh/S6LcDk6OZ++2xvOOuw,hzoBKdk+Q0yYGq9q/w9lEw,,,N,0,0,,,2012-04-12 15:32,2012-04-12 15:33,admin,admin
162,114363,3004,17129,3695,1,0,N,N,N,CP_Drtn,TT_Task,DT_FixedDUR2,RV_OK,TK_NotStart,V8-90,First floor slab&beams&staircase,,0,0,120,0,0,0,120,0,0,0,,,,2014-01-25 08:00,2014-02-10 16:00,,2014-01-25 08:00,2014-02-10 16:00,2014-01-25 08:00,2014-02-10 16:00,2014-01-25 08:00,2014-02-10 16:00,,2014-01-25 08:00,2014-02-10 16:00,,PT_Normal,,,,,cMCl4GWji0a9AK3elMuQlA,xIImiHkdzkiviwRaTraNFw,,,Y,0,0,,,2012-04-12 15:32,2012-04-12 15:33,admin,admin
163,114364,3004,17129,3695,1,0,N,N,N,CP_Drtn,TT_Task,DT_FixedDUR2,RV_OK,TK_NotStart,V8-100,Roof columns,,1368,0,40,0,0,0,40,0,0,0,,,,2014-08-30 08:00,2014-09-03 16:00,,2014-02-11 08:00,2014-02-16 16:00,2014-02-11 08:00,2014-02-16 16:00,2014-02-11 08:00,2014-02-16 16:00,,2014-08-30 08:00,2014-09-03 16:00,,PT_Normal,,,,,cpdbSRWSfEWk1XdL491NSg,82bTOh/R40KaPg/kygq2jw,,,N,0,0,,,2012-04-12 15:32,2012-04-12 15:33,admin,admin
164,114365,3004,17129,3695,1,0,N,N,N,CP_Drtn,TT_Task,DT_FixedDUR2,RV_OK,TK_NotStart,V8-120,Roof slab,,1368,0,40,0,0,0,40,0,0,0,,,,2014-09-04 08:00,2014-09-09 16:00,,2014-02-17 08:00,2014-02-22 16:00,2014-02-17 08:00,2014-02-22 16:00,2014-02-17 08:00,2014-02-22 16:00,,2014-09-04 08:00,2014-09-09 16:00,,PT_Normal,,,,,c+Wc0mRUakuvLR4tnVWw8g,MxlC1yOHLUGZzmlsswsK7A,,,N,0,0,,,2012-04-12 15:32,2012-04-12 15:33,admin,admin
165,114366,3004,17130,3695,1,0,N,N,N,CP_Drtn,TT_Task,DT_FixedDUR2,RV_OK,TK_NotStart,V8-40,Masonry under slab on grade,,120,0,32,0,0,0,32,0,0,0,,,,2013-12-07 08:00,2013-12-10 16:00,,2013-11-19 08:00,2013-11-23 16:00,2013-11-19 08:00,2013-11-23 16:00,2013-11-19 08:00,2013-11-23 16:00,,2013-12-07 08:00,2013-12-10 16:00,,PT_Normal,,,,,4MCdVRxRVU+f2lO1bq6vAg,f5h+Z6nDcUC0PpK76Pn5/A,,,N,0,0,,,2012-04-12 15:32,2012-04-12 15:33,admin,admin
166,114367,3004,17131,3695,1,0,N,N,N,CP_Drtn,TT_Task,DT_FixedDUR2,RV_OK,TK_NotStart,V8-50,Footings&masonry insulation,,120,0,32,0,0,0,32,0,0,0,,,,2013-12-11 08:00,2013-12-15 16:00,,2013-11-24 08:00,2013-11-27 16:00,2013-11-24 08:00,2013-11-27 16:00,2013-11-24 08:00,2013-11-27 16:00,,2013-12-11 08:00,2013-12-15 16:00,,PT_Normal,,,,,wystPd+LBUuOb+K1x6bjew,0z+CLipGyUmQHYQyvgaTTA,,,N,0,0,,,2012-04-12 15:32,2012-04-12 15:33,admin,admin
167,114368,3004,17130,3695,1,0,N,N,N,CP_Drtn,TT_Task,DT_FixedDUR2,RV_OK,TK_NotStart,V8-140,Masonry works,,992,0,160,0,0,0,160,0,0,0,,,,2014-07-23 08:00,2014-08-14 16:00,,2014-03-01 08:00,2014-03-23 16:00,2014-03-01 08:00,2014-03-23 16:00,2014-03-01 08:00,2014-03-23 16:00,,2014-07-23 08:00,2014-08-14 16:00,,PT_Normal,,,,,aew1MgLzlkKnBccDBLEmRw,+dBsEqjUlU2fhYTghwQhRQ,,,N,0,0,,,2012-04-12 15:32,2012-04-12 15:33,admin,admin
168,114369,3004,17132,3695,1,0,N,N,N,CP_Drtn,TT_Task,DT_FixedDUR2,RV_OK,TK_NotStart,V8-180,External plaster works,,992,0,168,0,0,0,168,0,0,0,,,,2014-08-16 08:00,2014-09-08 16:00,,2014-03-24 08:00,2014-04-16 16:00,2014-03-24 08:00,2014-04-16 16:00,2014-03-24 08:00,2014-04-16 16:00,,2014-08-16 08:00,2014-09-08 16:00,,PT_Normal,,,,,klbaVFe2Z0SvgtBDU9ewdg,7Rz4p4At2USRMKLJNWmd4A,,,N,0,0,,,2012-04-12 15:32,2012-04-12 15:33,admin,admin
169,114370,3004,17133,3695,1,0,N,N,N,CP_Drtn,TT_Task,DT_FixedDUR2,RV_OK,TK_NotStart,V8-200,Flooring works,,992,0,80,0,0,0,80,0,0,0,,,,2014-09-09 08:00,2014-09-20 16:00,,2014-04-17 08:00,2014-04-28 16:00,2014-04-17 08:00,2014-04-28 16:00,2014-04-17 08:00,2014-04-28 16:00,,2014-09-09 08:00,2014-09-20 16:00,,PT_Normal,,,,,iGI1g4v6TEyMmsJ9N27e5A,E6WV/PnBm0maPfWO6hcZxA,,,N,0,0,,,2012-04-12 15:32,2012-04-12 15:33,admin,admin
170,114371,3004,17134,3695,1,0,N,N,N,CP_Drtn,TT_Task,DT_FixedDUR2,RV_OK,TK_NotStart,V8-210,External painting,,992,0,80,0,0,0,80,0,0,0,,,,2014-09-21 08:00,2014-10-01 16:00,,2014-04-29 08:00,2014-05-10 16:00,2014-04-29 08:00,2014-05-10 16:00,2014-04-29 08:00,2014-05-10 16:00,,2014-09-21 08:00,2014-10-01 16:00,,PT_Normal,,,,,XGRUvLEkIUGFG7vzZ2c+gg,HmJdVI/rq0WhW1PI9Jqw0w,,,N,0,0,,,2012-04-12 15:32,2012-04-12 15:33,admin,admin
171,114372,3004,17135,3695,1,0,N,N,N,CP_Drtn,TT_Task,DT_FixedDUR2,RV_OK,TK_NotStart,V8-220,Doors & windows erection,,992,992,80,0,0,0,80,0,0,0,,,,2014-10-02 08:00,2014-10-13 16:00,,2014-05-11 08:00,2014-05-21 16:00,2014-05-11 08:00,2014-05-21 16:00,2014-05-11 08:00,2014-05-21 16:00,,2014-10-02 08:00,2014-10-13 16:00,,PT_Normal,,,,,PV558ZPotkij14Pd8c9S4A,Fx/dzQ4J8E+NyzmW3XuSYA,,,N,0,0,,,2012-04-12 15:32,2012-04-12 15:33,admin,admin
172,114373,3004,17136,3695,1,0,N,N,N,CP_Drtn,TT_Task,DT_FixedDUR2,RV_OK,TK_NotStart,V8-190,Mechanical & electrical works,,1320,1320,80,0,0,0,80,0,0,0,,,,2014-10-02 08:00,2014-10-13 16:00,,2014-03-24 08:00,2014-04-03 16:00,2014-03-24 08:00,2014-04-03 16:00,2014-03-24 08:00,2014-04-03 16:00,,2014-10-02 08:00,2014-10-13 16:00,,PT_Normal,,,,,gC6gu3BGPk2rA/iSb4HMBg,aFP6WuvRXEWXqA7RW/HOxg,,,N,0,0,,,2012-04-12 15:32,2012-04-12 15:33,admin,admin
173,114374,3004,17131,3695,1,0,N,N,N,CP_Drtn,TT_Task,DT_FixedDUR2,RV_OK,TK_NotStart,V8-160,Thermal insulation,,1368,0,56,0,0,0,56,0,0,0,,,,2014-09-24 08:00,2014-10-01 16:00,,2014-03-09 08:00,2014-03-16 16:00,2014-03-09 08:00,2014-03-16 16:00,2014-03-09 08:00,2014-03-16 16:00,,2014-09-24 08:00,2014-10-01 16:00,,PT_Normal,,,,,zbaC6xoCjkySLm4Sscu/Qg,DCS+Yzdork6xdWZeC4RLOg,,,N,0,0,,,2012-04-12 15:32,2012-04-12 15:33,admin,admin
174,114375,3004,17131,3695,1,0,N,N,N,CP_Drtn,TT_Task,DT_FixedDUR2,RV_OK,TK_NotStart,V8-150,Water proofing insulation,,1368,0,56,0,0,0,56,0,0,0,,,,2014-09-16 08:00,2014-09-23 16:00,,2014-03-01 08:00,2014-03-08 16:00,2014-03-01 08:00,2014-03-08 16:00,2014-03-01 08:00,2014-03-08 16:00,,2014-09-16 08:00,2014-09-23 16:00,,PT_Normal,,,,,NAPEqmqxC0aFYQcUUGh2IQ,E/+1oW6gj0KvujstfyD+jA,,,N,0,0,,,2012-04-12 15:32,2012-04-12 15:33,admin,admin
175,114376,3004,17131,3695,1,0,N,N,N,CP_Drtn,TT_Task,DT_FixedDUR2,RV_OK,TK_NotStart,V8-130,Slopped concrete,,1368,0,40,0,0,0,40,0,0,0,,,,2014-09-10 08:00,2014-09-15 16:00,,2014-02-23 08:00,2014-02-27 16:00,2014-02-23 08:00,2014-02-27 16:00,2014-02-23 08:00,2014-02-27 16:00,,2014-09-10 08:00,2014-09-15 16:00,,PT_Normal,,,,,miMniMmDdkW1RDg0p1gqeQ,sxUTCjMrYUWCkWhTWoZs2w,,,N,0,0,,,2012-04-12 15:32,2012-04-12 15:33,admin,admin
176,114377,3004,17131,3695,1,0,N,N,N,CP_Drtn,TT_Task,DT_FixedDUR2,RV_OK,TK_NotStart,V8-170,Cement tiles,,1368,1368,80,0,0,0,80,0,0,0,,,,2014-10-02 08:00,2014-10-13 16:00,,2014-03-17 08:00,2014-03-27 16:00,2014-03-17 08:00,2014-03-27 16:00,2014-03-17 08:00,2014-03-27 16:00,,2014-10-02 08:00,2014-10-13 16:00,,PT_Normal,,,,,+vN/oG4FkEG/PyXCeKUCZw,IiU5/QMZJECBPBA7jpxQIg,,,N,0,0,,,2012-04-12 15:32,2012-04-12 15:33,admin,admin
177,114378,3004,17129,3695,1,0,N,N,N,CP_Drtn,TT_Task,DT_FixedDUR2,RV_OK,TK_NotStart,V8-110,Slab on grade(R.C&P.C),,1072,80,40,0,0,0,40,0,0,0,,,,2014-07-17 08:00,2014-07-22 16:00,,2014-02-11 08:00,2014-02-16 16:00,2014-02-11 08:00,2014-02-16 16:00,2014-02-11 08:00,2014-02-16 16:00,,2014-07-17 08:00,2014-07-22 16:00,,PT_Normal,,,,,zfLod353H0qwNay7lRxJXw,7RcDWDx3KUa3oAz1O8EARw,,,N,0,0,,,2012-04-12 15:32,2012-04-12 15:33,admin,admin
178,114379,3004,17139,3695,1,0,N,N,N,CP_Drtn,TT_Task,DT_FixedDUR2,RV_OK,TK_NotStart,V9-60,Backfilling under slab on grade,,120,120,32,0,0,0,32,0,0,0,,,,2014-02-26 08:00,2014-03-02 16:00,,2014-02-09 08:00,2014-02-12 16:00,2014-02-09 08:00,2014-02-12 16:00,2014-02-09 08:00,2014-02-12 16:00,,2014-02-26 08:00,2014-03-02 16:00,,PT_Normal,,,,,Wr6WwR3lL0Gpa45vzve6PA,4apNus5i10GIP3LjzE1iSQ,,,N,0,0,,,2012-04-12 15:32,2012-04-12 15:33,admin,admin
179,114380,3004,17138,3695,1,0,N,N,N,CP_Drtn,TT_Task,DT_FixedDUR2,RV_OK,TK_NotStart,V9-10,P.c footing,,168,0,40,0,0,0,40,0,0,0,,,,2014-01-19 08:00,2014-01-23 16:00,,2013-12-25 08:00,2013-12-30 16:00,2013-12-25 08:00,2013-12-30 16:00,2013-12-25 08:00,2013-12-30 16:00,,2014-01-19 08:00,2014-01-23 16:00,,PT_Normal,,,,,zA3tRH/wTE6sXgbxhGw2lQ,S1r5c3Yc+U+pr5A09nJqqw,,,N,0,0,,,2012-04-12 15:32,2012-04-12 15:33,admin,admin
180,114381,3004,17138,3695,1,0,N,N,N,CP_Drtn,TT_Task,DT_FixedDUR2,RV_OK,TK_NotStart,V9-20,R.c concrete foundations,,168,48,96,0,0,0,96,0,0,0,,,,2014-01-25 08:00,2014-02-06 16:00,,2013-12-31 08:00,2014-01-13 16:00,2013-12-31 08:00,2014-01-13 16:00,2013-12-31 08:00,2014-01-13 16:00,,2014-01-25 08:00,2014-02-06 16:00,,PT_Normal,,,,,IoPK4EApuEyG9sx+atKV+w,X7qkwHLUdEWP/SGIf2V98A,,,N,0,0,,,2012-04-12 15:32,2012-04-12 15:33,admin,admin
181,114382,3004,17140,3695,1,0,N,N,N,CP_Drtn,TT_Task,DT_FixedDUR2,RV_OK,TK_NotStart,V9-30,Ground floor columns,,120,0,64,0,0,0,64,0,0,0,,,,2014-02-08 08:00,2014-02-16 16:00,,2014-01-21 08:00,2014-01-29 16:00,2014-01-21 08:00,2014-01-29 16:00,2014-01-21 08:00,2014-01-29 16:00,,2014-02-08 08:00,2014-02-16 16:00,,PT_Normal,,,,,TNgpi56C9kS5qdxAGTputA,P8055+JDQkOn/EIl2gLJiA,,,N,0,0,,,2012-04-12 15:32,2012-04-12 15:33,admin,admin
182,114383,3004,17140,3695,1,0,N,N,N,CP_Drtn,TT_Task,DT_FixedDUR2,RV_OK,TK_NotStart,V9-70,Ground floor slab&beams&staircase,,0,0,120,0,0,0,120,0,0,0,,,,2014-03-03 08:00,2014-03-19 16:00,,2014-03-03 08:00,2014-03-19 16:00,2014-03-03 08:00,2014-03-19 16:00,2014-03-03 08:00,2014-03-19 16:00,,2014-03-03 08:00,2014-03-19 16:00,,PT_Normal,,,,,kzrV7JRT1ECRN5UMqPNbOw,35e31Zl5Q0GlUkBNR03KUA,,,Y,0,0,,,2012-04-12 15:32,2012-04-12 15:33,admin,admin
183,114384,3004,17140,3695,1,0,N,N,N,CP_Drtn,TT_Task,DT_FixedDUR2,RV_OK,TK_NotStart,V9-80,First floor columns,,56,0,64,0,0,0,64,0,0,0,,,,2014-03-29 08:00,2014-04-06 16:00,,2014-03-20 08:00,2014-03-29 16:00,2014-03-20 08:00,2014-03-29 16:00,2014-03-20 08:00,2014-03-29 16:00,,2014-03-29 08:00,2014-04-06 16:00,,PT_Normal,,,,,zvvfvgDB1kqhSlo6bdpwwA,hzoBKdk+Q0yYGq9q/w9lEw,,,N,0,0,,,2012-04-12 15:32,2012-04-12 15:33,admin,admin
184,114385,3004,17140,3695,1,0,N,N,N,CP_Drtn,TT_Task,DT_FixedDUR2,RV_OK,TK_NotStart,V9-90,First floor slab&beams&staircase,,0,0,120,0,0,0,120,0,0,0,,,,2014-04-07 08:00,2014-04-23 16:00,,2014-04-07 08:00,2014-04-23 16:00,2014-04-07 08:00,2014-04-23 16:00,2014-04-07 08:00,2014-04-23 16:00,,2014-04-07 08:00,2014-04-23 16:00,,PT_Normal,,,,,CjxgMNMzFE+RbylnzPNj1w,xIImiHkdzkiviwRaTraNFw,,,Y,0,0,,,2012-04-12 15:32,2012-04-12 15:33,admin,admin
185,114386,3004,17140,3695,1,0,N,N,N,CP_Drtn,TT_Task,DT_FixedDUR2,RV_OK,TK_NotStart,V9-100,Roof columns,,872,0,40,0,0,0,40,0,0,0,,,,2014-08-30 08:00,2014-09-03 16:00,,2014-04-24 08:00,2014-04-29 16:00,2014-04-24 08:00,2014-04-29 16:00,2014-04-24 08:00,2014-04-29 16:00,,2014-08-30 08:00,2014-09-03 16:00,,PT_Normal,,,,,aR8LiF6QN0iFGOFTs0NgUQ,82bTOh/R40KaPg/kygq2jw,,,N,0,0,,,2012-04-12 15:32,2012-04-12 15:33,admin,admin
186,114387,3004,17140,3695,1,0,N,N,N,CP_Drtn,TT_Task,DT_FixedDUR2,RV_OK,TK_NotStart,V9-120,Roof slab,,872,0,40,0,0,0,40,0,0,0,,,,2014-09-04 08:00,2014-09-09 16:00,,2014-04-30 08:00,2014-05-05 16:00,2014-04-30 08:00,2014-05-05 16:00,2014-04-30 08:00,2014-05-05 16:00,,2014-09-04 08:00,2014-09-09 16:00,,PT_Normal,,,,,iMETy0tOpUO4z9Y+3pbDsA,MxlC1yOHLUGZzmlsswsK7A,,,N,0,0,,,2012-04-12 15:32,2012-04-12 15:33,admin,admin
187,114388,3004,17141,3695,1,0,N,N,N,CP_Drtn,TT_Task,DT_FixedDUR2,RV_OK,TK_NotStart,V9-40,Masonry under slab on grade,,120,0,32,0,0,0,32,0,0,0,,,,2014-02-17 08:00,2014-02-20 16:00,,2014-01-30 08:00,2014-02-03 16:00,2014-01-30 08:00,2014-02-03 16:00,2014-01-30 08:00,2014-02-03 16:00,,2014-02-17 08:00,2014-02-20 16:00,,PT_Normal,,,,,wyavrAtQ8E6s0jc/JeMM+w,f5h+Z6nDcUC0PpK76Pn5/A,,,N,0,0,,,2012-04-12 15:32,2012-04-12 15:33,admin,admin
188,114389,3004,17142,3695,1,0,N,N,N,CP_Drtn,TT_Task,DT_FixedDUR2,RV_OK,TK_NotStart,V9-50,Footings&masonry insulation,,120,0,32,0,0,0,32,0,0,0,,,,2014-02-22 08:00,2014-02-25 16:00,,2014-02-04 08:00,2014-02-08 16:00,2014-02-04 08:00,2014-02-08 16:00,2014-02-04 08:00,2014-02-08 16:00,,2014-02-22 08:00,2014-02-25 16:00,,PT_Normal,,,,,5Qw69QFGE0ycETY1liXudA,0z+CLipGyUmQHYQyvgaTTA,,,N,0,0,,,2012-04-12 15:32,2012-04-12 15:33,admin,admin
189,114390,3004,17141,3695,1,0,N,N,N,CP_Drtn,TT_Task,DT_FixedDUR2,RV_OK,TK_NotStart,V9-140,Masonry works,,496,0,160,0,0,0,160,0,0,0,,,,2014-07-23 08:00,2014-08-14 16:00,,2014-05-12 08:00,2014-06-03 16:00,2014-05-12 08:00,2014-06-03 16:00,2014-05-12 08:00,2014-06-03 16:00,,2014-07-23 08:00,2014-08-14 16:00,,PT_Normal,,,,,ehwLLduQPEG93Xfvk3TEpQ,+dBsEqjUlU2fhYTghwQhRQ,,,N,0,0,,,2012-04-12 15:32,2012-04-12 15:33,admin,admin
190,114391,3004,17143,3695,1,0,N,N,N,CP_Drtn,TT_Task,DT_FixedDUR2,RV_OK,TK_NotStart,V9-180,External plaster works,,496,0,168,0,0,0,168,0,0,0,,,,2014-08-16 08:00,2014-09-08 16:00,,2014-06-04 08:00,2014-06-28 16:00,2014-06-04 08:00,2014-06-28 16:00,2014-06-04 08:00,2014-06-28 16:00,,2014-08-16 08:00,2014-09-08 16:00,,PT_Normal,,,,,Ll5YihiU8kqjQBqKev9m7w,7Rz4p4At2USRMKLJNWmd4A,,,N,0,0,,,2012-04-12 15:32,2012-04-12 15:33,admin,admin
191,114392,3004,17144,3695,1,0,N,N,N,CP_Drtn,TT_Task,DT_FixedDUR2,RV_OK,TK_NotStart,V9-200,Flooring works,,496,0,80,0,0,0,80,0,0,0,,,,2014-09-09 08:00,2014-09-20 16:00,,2014-06-29 08:00,2014-07-09 16:00,2014-06-29 08:00,2014-07-09 16:00,2014-06-29 08:00,2014-07-09 16:00,,2014-09-09 08:00,2014-09-20 16:00,,PT_Normal,,,,,YOYHHKMAm0yRU1iWgvBTfQ,E6WV/PnBm0maPfWO6hcZxA,,,N,0,0,,,2012-04-12 15:32,2012-04-12 15:33,admin,admin
192,114393,3004,17145,3695,1,0,N,N,N,CP_Drtn,TT_Task,DT_FixedDUR2,RV_OK,TK_NotStart,V9-210,External painting,,496,0,80,0,0,0,80,0,0,0,,,,2014-09-21 08:00,2014-10-01 16:00,,2014-07-10 08:00,2014-07-21 16:00,2014-07-10 08:00,2014-07-21 16:00,2014-07-10 08:00,2014-07-21 16:00,,2014-09-21 08:00,2014-10-01 16:00,,PT_Normal,,,,,dVqLjezhNUioyIdinZEOJA,HmJdVI/rq0WhW1PI9Jqw0w,,,N,0,0,,,2012-04-12 15:32,2012-04-12 15:33,admin,admin
193,114394,3004,17146,3695,1,0,N,N,N,CP_Drtn,TT_Task,DT_FixedDUR2,RV_OK,TK_NotStart,V9-220,Doors & windows erection,,496,496,80,0,0,0,80,0,0,0,,,,2014-10-02 08:00,2014-10-13 16:00,,2014-07-22 08:00,2014-08-02 16:00,2014-07-22 08:00,2014-08-02 16:00,2014-07-22 08:00,2014-08-02 16:00,,2014-10-02 08:00,2014-10-13 16:00,,PT_Normal,,,,,UMC16ooYUEu8zg0URYcxsg,Fx/dzQ4J8E+NyzmW3XuSYA,,,N,0,0,,,2012-04-12 15:32,2012-04-12 15:33,admin,admin
194,114395,3004,17147,3695,1,0,N,N,N,CP_Drtn,TT_Task,DT_FixedDUR2,RV_OK,TK_NotStart,V9-190,Mechanical & electrical works,,824,824,80,0,0,0,80,0,0,0,,,,2014-10-02 08:00,2014-10-13 16:00,,2014-06-04 08:00,2014-06-15 16:00,2014-06-04 08:00,2014-06-15 16:00,2014-06-04 08:00,2014-06-15 16:00,,2014-10-02 08:00,2014-10-13 16:00,,PT_Normal,,,,,39wkTCoeJkOUZSdegabFMw,aFP6WuvRXEWXqA7RW/HOxg,,,N,0,0,,,2012-04-12 15:32,2012-04-12 15:33,admin,admin
195,114396,3004,17142,3695,1,0,N,N,N,CP_Drtn,TT_Task,DT_FixedDUR2,RV_OK,TK_NotStart,V9-160,Thermal insulation,,872,0,56,0,0,0,56,0,0,0,,,,2014-09-24 08:00,2014-10-01 16:00,,2014-05-20 08:00,2014-05-27 16:00,2014-05-20 08:00,2014-05-27 16:00,2014-05-20 08:00,2014-05-27 16:00,,2014-09-24 08:00,2014-10-01 16:00,,PT_Normal,,,,,s7QTtfmDBEqf2p9jPg1vzA,DCS+Yzdork6xdWZeC4RLOg,,,N,0,0,,,2012-04-12 15:32,2012-04-12 15:33,admin,admin
196,114397,3004,17142,3695,1,0,N,N,N,CP_Drtn,TT_Task,DT_FixedDUR2,RV_OK,TK_NotStart,V9-150,Water proofing insulation,,872,0,56,0,0,0,56,0,0,0,,,,2014-09-16 08:00,2014-09-23 16:00,,2014-05-12 08:00,2014-05-19 16:00,2014-05-12 08:00,2014-05-19 16:00,2014-05-12 08:00,2014-05-19 16:00,,2014-09-16 08:00,2014-09-23 16:00,,PT_Normal,,,,,S9OaZEPryUOh4/nilNb8TQ,E/+1oW6gj0KvujstfyD+jA,,,N,0,0,,,2012-04-12 15:32,2012-04-12 15:33,admin,admin
197,114398,3004,17142,3695,1,0,N,N,N,CP_Drtn,TT_Task,DT_FixedDUR2,RV_OK,TK_NotStart,V9-130,Slopped concrete,,872,0,40,0,0,0,40,0,0,0,,,,2014-09-10 08:00,2014-09-15 16:00,,2014-05-06 08:00,2014-05-11 16:00,2014-05-06 08:00,2014-05-11 16:00,2014-05-06 08:00,2014-05-11 16:00,,2014-09-10 08:00,2014-09-15 16:00,,PT_Normal,,,,,FJhFyd0yqkOpihx/Bl5g1g,sxUTCjMrYUWCkWhTWoZs2w,,,N,0,0,,,2012-04-12 15:32,2012-04-12 15:33,admin,admin
198,114399,3004,17142,3695,1,0,N,N,N,CP_Drtn,TT_Task,DT_FixedDUR2,RV_OK,TK_NotStart,V9-170,Cement tiles,,872,872,80,0,0,0,80,0,0,0,,,,2014-10-02 08:00,2014-10-13 16:00,,2014-05-28 08:00,2014-06-08 16:00,2014-05-28 08:00,2014-06-08 16:00,2014-05-28 08:00,2014-06-08 16:00,,2014-10-02 08:00,2014-10-13 16:00,,PT_Normal,,,,,F/rhkejM6UCS4VqTsdCHLw,IiU5/QMZJECBPBA7jpxQIg,,,N,0,0,,,2012-04-12 15:32,2012-04-12 15:33,admin,admin
199,114400,3004,17140,3695,1,0,N,N,N,CP_Drtn,TT_Task,DT_FixedDUR2,RV_OK,TK_NotStart,V9-110,Slab on grade(R.C&P.C),,576,80,40,0,0,0,40,0,0,0,,,,2014-07-17 08:00,2014-07-22 16:00,,2014-04-24 08:00,2014-04-29 16:00,2014-04-24 08:00,2014-04-29 16:00,2014-04-24 08:00,2014-04-29 16:00,,2014-07-17 08:00,2014-07-22 16:00,,PT_Normal,,,,,3NMiE5j8gUqlXaHo1XKsIg,7RcDWDx3KUa3oAz1O8EARw,,,N,0,0,,,2012-04-12 15:32,2012-04-12 15:33,admin,admin
200,114401,3004,17150,3695,1,0,N,N,N,CP_Drtn,TT_Task,DT_FixedDUR2,RV_OK,TK_NotStart,V10-60,Backfilling under slab on grade,,120,120,32,0,0,0,32,0,0,0,,,,2014-05-10 08:00,2014-05-13 16:00,,2014-04-22 08:00,2014-04-26 16:00,2014-04-22 08:00,2014-04-26 16:00,2014-04-22 08:00,2014-04-26 16:00,,2014-05-10 08:00,2014-05-13 16:00,,PT_Normal,,,,,m6ZhSH97nUGdZSLFt5H84Q,4apNus5i10GIP3LjzE1iSQ,,,N,0,0,,,2012-04-12 15:32,2012-04-12 15:33,admin,admin
201,114402,3004,17149,3695,1,0,N,N,N,CP_Drtn,TT_Task,DT_FixedDUR2,RV_OK,TK_NotStart,V10-10,P.c footing,,184,0,40,0,0,0,40,0,0,0,,,,2014-04-01 08:00,2014-04-06 16:00,,2014-03-05 08:00,2014-03-10 16:00,2014-03-05 08:00,2014-03-10 16:00,2014-03-05 08:00,2014-03-10 16:00,,2014-04-01 08:00,2014-04-06 16:00,,PT_Normal,,,,,zPmPx0RT70Kx5FVniU4Zlg,S1r5c3Yc+U+pr5A09nJqqw,,,N,0,0,,,2012-04-12 15:32,2012-04-12 15:33,admin,admin
202,114403,3004,17149,3695,1,0,N,N,N,CP_Drtn,TT_Task,DT_FixedDUR2,RV_OK,TK_NotStart,V10-20,R.c concrete foundations,,184,64,96,0,0,0,96,0,0,0,,,,2014-04-07 08:00,2014-04-20 16:00,,2014-03-11 08:00,2014-03-24 16:00,2014-03-11 08:00,2014-03-24 16:00,2014-03-11 08:00,2014-03-24 16:00,,2014-04-07 08:00,2014-04-20 16:00,,PT_Normal,,,,,BOeYg4P1HUKCj/Kaps5wVw,X7qkwHLUdEWP/SGIf2V98A,,,N,0,0,,,2012-04-12 15:32,2012-04-12 15:33,admin,admin
203,114404,3004,17151,3695,1,0,N,N,N,CP_Drtn,TT_Task,DT_FixedDUR2,RV_OK,TK_NotStart,V10-30,Ground floor columns,,120,0,64,0,0,0,64,0,0,0,,,,2014-04-21 08:00,2014-04-29 16:00,,2014-04-03 08:00,2014-04-12 16:00,2014-04-03 08:00,2014-04-12 16:00,2014-04-03 08:00,2014-04-12 16:00,,2014-04-21 08:00,2014-04-29 16:00,,PT_Normal,,,,,vvoQtCUyYUy2rF8XisT6zQ,P8055+JDQkOn/EIl2gLJiA,,,N,0,0,,,2012-04-12 15:32,2012-04-12 15:33,admin,admin
204,114405,3004,17151,3695,1,0,N,N,N,CP_Drtn,TT_Task,DT_FixedDUR2,RV_OK,TK_NotStart,V10-70,Ground floor slab&beams&staircase,,0,0,120,0,0,0,120,0,0,0,,,,2014-05-14 08:00,2014-05-31 16:00,,2014-05-14 08:00,2014-05-31 16:00,2014-05-14 08:00,2014-05-31 16:00,2014-05-14 08:00,2014-05-31 16:00,,2014-05-14 08:00,2014-05-31 16:00,,PT_Normal,,,,,9Y4rU8Br9EiAIaMnRaPZzg,35e31Zl5Q0GlUkBNR03KUA,,,Y,0,0,,,2012-04-12 15:32,2012-04-12 15:33,admin,admin
205,114406,3004,17151,3695,1,0,N,N,N,CP_Drtn,TT_Task,DT_FixedDUR2,RV_OK,TK_NotStart,V10-80,First floor columns,,56,56,64,0,0,0,64,0,0,0,,,,2014-06-09 08:00,2014-06-17 16:00,,2014-06-01 08:00,2014-06-09 16:00,2014-06-01 08:00,2014-06-09 16:00,2014-06-01 08:00,2014-06-09 16:00,,2014-06-09 08:00,2014-06-17 16:00,,PT_Normal,,,,,DF6x3txQ/EinFbKxA6/PnA,hzoBKdk+Q0yYGq9q/w9lEw,,,N,0,0,,,2012-04-12 15:32,2012-04-12 15:33,admin,admin
206,114407,3004,17151,3695,1,0,N,N,N,CP_Drtn,TT_Task,DT_FixedDUR2,RV_OK,TK_NotStart,V10-90,First floor slab&beams&staircase,,0,0,120,0,0,0,120,0,0,0,,,,2014-06-18 08:00,2014-07-05 16:00,,2014-06-18 08:00,2014-07-05 16:00,2014-06-18 08:00,2014-07-05 16:00,2014-06-18 08:00,2014-07-05 16:00,,2014-06-18 08:00,2014-07-05 16:00,,PT_Normal,,,,,RmGklb5ibEqSyA9+TyQrlA,xIImiHkdzkiviwRaTraNFw,,,Y,0,0,,,2012-04-12 15:32,2012-04-12 15:33,admin,admin
207,114408,3004,17151,3695,1,0,N,N,N,CP_Drtn,TT_Task,DT_FixedDUR2,RV_OK,TK_NotStart,V10-100,Roof columns,,376,0,40,0,0,0,40,0,0,0,,,,2014-08-30 08:00,2014-09-03 16:00,,2014-07-06 08:00,2014-07-10 16:00,2014-07-06 08:00,2014-07-10 16:00,2014-07-06 08:00,2014-07-10 16:00,,2014-08-30 08:00,2014-09-03 16:00,,PT_Normal,,,,,n5gB+lQZsUCKw8Ti/KhmYw,82bTOh/R40KaPg/kygq2jw,,,N,0,0,,,2012-04-12 15:32,2012-04-12 15:33,admin,admin
208,114409,3004,17151,3695,1,0,N,N,N,CP_Drtn,TT_Task,DT_FixedDUR2,RV_OK,TK_NotStart,V10-120,Roof slab,,376,0,40,0,0,0,40,0,0,0,,,,2014-09-04 08:00,2014-09-09 16:00,,2014-07-12 08:00,2014-07-16 16:00,2014-07-12 08:00,2014-07-16 16:00,2014-07-12 08:00,2014-07-16 16:00,,2014-09-04 08:00,2014-09-09 16:00,,PT_Normal,,,,,RwrKowHk4keIAzmrjdoSiw,MxlC1yOHLUGZzmlsswsK7A,,,N,0,0,,,2012-04-12 15:32,2012-04-12 15:33,admin,admin
209,114410,3004,17152,3695,1,0,N,N,N,CP_Drtn,TT_Task,DT_FixedDUR2,RV_OK,TK_NotStart,V10-40,Masonry under slab on grade,,120,0,32,0,0,0,32,0,0,0,,,,2014-04-30 08:00,2014-05-04 16:00,,2014-04-13 08:00,2014-04-16 16:00,2014-04-13 08:00,2014-04-16 16:00,2014-04-13 08:00,2014-04-16 16:00,,2014-04-30 08:00,2014-05-04 16:00,,PT_Normal,,,,,/rMbkxRjuEO9HZBbB+8Buw,f5h+Z6nDcUC0PpK76Pn5/A,,,N,0,0,,,2012-04-12 15:32,2012-04-12 15:33,admin,admin
210,114411,3004,17153,3695,1,0,N,N,N,CP_Drtn,TT_Task,DT_FixedDUR2,RV_OK,TK_NotStart,V10-50,Footings&masonry insulation,,120,0,32,0,0,0,32,0,0,0,,,,2014-05-05 08:00,2014-05-08 16:00,,2014-04-17 08:00,2014-04-21 16:00,2014-04-17 08:00,2014-04-21 16:00,2014-04-17 08:00,2014-04-21 16:00,,2014-05-05 08:00,2014-05-08 16:00,,PT_Normal,,,,,iqEAnUPp9kKqYHHjkboS5w,0z+CLipGyUmQHYQyvgaTTA,,,N,0,0,,,2012-04-12 15:32,2012-04-12 15:33,admin,admin
211,114412,3004,17152,3695,1,0,N,N,N,CP_Drtn,TT_Task,DT_FixedDUR2,RV_OK,TK_NotStart,V10-140,Masonry works,,0,0,160,0,0,0,160,0,0,0,,,,2014-07-23 08:00,2014-08-14 16:00,,2014-07-23 08:00,2014-08-14 16:00,2014-07-23 08:00,2014-08-14 16:00,2014-07-23 08:00,2014-08-14 16:00,,2014-07-23 08:00,2014-08-14 16:00,,PT_Normal,,,,,5CwwCpNwOUKoVoDDbaOKfQ,+dBsEqjUlU2fhYTghwQhRQ,,,Y,0,0,,,2012-04-12 15:32,2012-04-12 15:33,admin,admin
212,114413,3004,17154,3695,1,0,N,N,N,CP_Drtn,TT_Task,DT_FixedDUR2,RV_OK,TK_NotStart,V10-180,External plaster works,,0,0,168,0,0,0,168,0,0,0,,,,2014-08-16 08:00,2014-09-08 16:00,,2014-08-16 08:00,2014-09-08 16:00,2014-08-16 08:00,2014-09-08 16:00,2014-08-16 08:00,2014-09-08 16:00,,2014-08-16 08:00,2014-09-08 16:00,,PT_Normal,,,,,SdU1+XNNz0SWl1KltLePaQ,7Rz4p4At2USRMKLJNWmd4A,,,Y,0,0,,,2012-04-12 15:32,2012-04-12 15:33,admin,admin
213,114414,3004,17155,3695,1,0,N,N,N,CP_Drtn,TT_Task,DT_FixedDUR2,RV_OK,TK_NotStart,V10-200,Flooring works,,0,0,80,0,0,0,80,0,0,0,,,,2014-09-09 08:00,2014-09-20 16:00,,2014-09-09 08:00,2014-09-20 16:00,2014-09-09 08:00,2014-09-20 16:00,2014-09-09 08:00,2014-09-20 16:00,,2014-09-09 08:00,2014-09-20 16:00,,PT_Normal,,,,,+M95eCsMYEGw2KQ2JWsz5A,E6WV/PnBm0maPfWO6hcZxA,,,Y,0,0,,,2012-04-12 15:32,2012-04-12 15:33,admin,admin
214,114415,3004,17156,3695,1,0,N,N,N,CP_Drtn,TT_Task,DT_FixedDUR2,RV_OK,TK_NotStart,V10-210,External painting,,0,0,80,0,0,0,80,0,0,0,,,,2014-09-21 08:00,2014-10-01 16:00,,2014-09-21 08:00,2014-10-01 16:00,2014-09-21 08:00,2014-10-01 16:00,2014-09-21 08:00,2014-10-01 16:00,,2014-09-21 08:00,2014-10-01 16:00,,PT_Normal,,,,,2pw7F93Xt0u2+l7HaFddkA,HmJdVI/rq0WhW1PI9Jqw0w,,,Y,0,0,,,2012-04-12 15:32,2012-04-12 15:33,admin,admin
215,114416,3004,17157,3695,1,0,N,N,N,CP_Drtn,TT_Task,DT_FixedDUR2,RV_OK,TK_NotStart,V10-220,Doors & windows erection,,0,0,80,0,0,0,80,0,0,0,,,,2014-10-02 08:00,2014-10-13 16:00,,2014-10-02 08:00,2014-10-13 16:00,2014-10-02 08:00,2014-10-13 16:00,2014-10-02 08:00,2014-10-13 16:00,,2014-10-02 08:00,2014-10-13 16:00,,PT_Normal,,,,,GR5GdL8qWkqa4DCyLR1jzQ,Fx/dzQ4J8E+NyzmW3XuSYA,,,Y,0,0,,,2012-04-12 15:32,2012-04-12 15:33,admin,admin
216,114417,3004,17158,3695,1,0,N,N,N,CP_Drtn,TT_Task,DT_FixedDUR2,RV_OK,TK_NotStart,V10-190,Mechanical & electrical works,,328,328,80,0,0,0,80,0,0,0,,,,2014-10-02 08:00,2014-10-13 16:00,,2014-08-16 08:00,2014-08-26 16:00,2014-08-16 08:00,2014-08-26 16:00,2014-08-16 08:00,2014-08-26 16:00,,2014-10-02 08:00,2014-10-13 16:00,,PT_Normal,,,,,GkAbe+jjwE6usRXA82G3QQ,aFP6WuvRXEWXqA7RW/HOxg,,,N,0,0,,,2012-04-12 15:32,2012-04-12 15:33,admin,admin
217,114418,3004,17153,3695,1,0,N,N,N,CP_Drtn,TT_Task,DT_FixedDUR2,RV_OK,TK_NotStart,V10-160,Thermal insulation,,376,0,56,0,0,0,56,0,0,0,,,,2014-09-24 08:00,2014-10-01 16:00,,2014-07-31 08:00,2014-08-07 16:00,2014-07-31 08:00,2014-08-07 16:00,2014-07-31 08:00,2014-08-07 16:00,,2014-09-24 08:00,2014-10-01 16:00,,PT_Normal,,,,,Vj/43CWFnkeqisNV89gt+Q,DCS+Yzdork6xdWZeC4RLOg,,,N,0,0,,,2012-04-12 15:32,2012-04-12 15:33,admin,admin
218,114419,3004,17153,3695,1,0,N,N,N,CP_Drtn,TT_Task,DT_FixedDUR2,RV_OK,TK_NotStart,V10-150,Water proofing insulation,,376,0,56,0,0,0,56,0,0,0,,,,2014-09-16 08:00,2014-09-23 16:00,,2014-07-23 08:00,2014-07-30 16:00,2014-07-23 08:00,2014-07-30 16:00,2014-07-23 08:00,2014-07-30 16:00,,2014-09-16 08:00,2014-09-23 16:00,,PT_Normal,,,,,WsyO/bdLNUm2n1VCTYr+Mg,E/+1oW6gj0KvujstfyD+jA,,,N,0,0,,,2012-04-12 15:32,2012-04-12 15:33,admin,admin
219,114420,3004,17153,3695,1,0,N,N,N,CP_Drtn,TT_Task,DT_FixedDUR2,RV_OK,TK_NotStart,V10-130,Slopped concrete,,376,0,40,0,0,0,40,0,0,0,,,,2014-09-10 08:00,2014-09-15 16:00,,2014-07-17 08:00,2014-07-22 16:00,2014-07-17 08:00,2014-07-22 16:00,2014-07-17 08:00,2014-07-22 16:00,,2014-09-10 08:00,2014-09-15 16:00,,PT_Normal,,,,,OTJRtv1sG0GwM/Oe7Ouoqg,sxUTCjMrYUWCkWhTWoZs2w,,,N,0,0,,,2012-04-12 15:32,2012-04-12 15:33,admin,admin
220,114421,3004,17153,3695,1,0,N,N,N,CP_Drtn,TT_Task,DT_FixedDUR2,RV_OK,TK_NotStart,V10-170,Cement tiles,,376,376,80,0,0,0,80,0,0,0,,,,2014-10-02 08:00,2014-10-13 16:00,,2014-08-09 08:00,2014-08-19 16:00,2014-08-09 08:00,2014-08-19 16:00,2014-08-09 08:00,2014-08-19 16:00,,2014-10-02 08:00,2014-10-13 16:00,,PT_Normal,,,,,kvM4gxoWEUKKSrXTw7AIyw,IiU5/QMZJECBPBA7jpxQIg,,,N,0,0,,,2012-04-12 15:32,2012-04-12 15:33,admin,admin
221,114422,3004,17151,3695,1,0,N,N,N,CP_Drtn,TT_Task,DT_FixedDUR2,RV_OK,TK_NotStart,V10-110,Slab on grade(R.C&P.C),,80,80,40,0,0,0,40,0,0,0,,,,2014-07-17 08:00,2014-07-22 16:00,,2014-07-06 08:00,2014-07-10 16:00,2014-07-06 08:00,2014-07-10 16:00,2014-07-06 08:00,2014-07-10 16:00,,2014-07-17 08:00,2014-07-22 16:00,,PT_Normal,,,,,bK5komfRIkONZBVtYKSFag,7RcDWDx3KUa3oAz1O8EARw,,,N,0,0,,,2012-04-12 15:32,2012-04-12 15:33,admin,admin
