,task_id,proj_id,wbs_id,clndr_id,est_wt,phys_complete_pct,rev_fdbk_flag,lock_plan_flag,auto_compute_act_flag,complete_pct_type,task_type,duration_type,review_type,status_code,task_code,task_name,rsrc_id,total_float_hr_cnt,free_float_hr_cnt,remain_drtn_hr_cnt,act_work_qty,remain_work_qty,target_work_qty,target_drtn_hr_cnt,target_equip_qty,act_equip_qty,remain_equip_qty,cstr_date,act_start_date,act_end_date,late_start_date,late_end_date,expect_end_date,early_start_date,early_end_date,restart_date,reend_date,target_start_date,target_end_date,review_end_date,rem_late_start_date,rem_late_end_date,cstr_type,priority_type,suspend_date,resume_date,float_path,float_path_order,guid,tmpl_guid,cstr_date2,cstr_type2,driving_path_flag,act_this_per_work_qty,act_this_per_equip_qty,external_early_start_date,external_late_end_date,create_date,update_date,create_user,update_user
0,138750,4412,21819,5284,1,0,N,N,N,CP_Drtn,TT_Task,DT_FixedDUR2,RV_OK,TK_NotStart,A1010,Demobilization,,704,0,56,0,0,0,56,0,0,0,,,,2012-09-12 08:00,2012-09-19 17:00,,2012-06-02 08:00,2012-06-09 17:00,2012-06-02 08:00,2012-06-09 17:00,2012-06-02 08:00,2012-06-09 17:00,,2012-09-12 08:00,2012-09-19 17:00,,PT_Normal,,,,,/tbYKj8Y6UmK5dslS9PfzA,,,,N,0,0,,,2012-06-06 13:54,2012-06-06 13:54,admin,admin
1,138751,4412,21819,5284,1,0,N,N,N,CP_Drtn,TT_Task,DT_FixedDUR2,RV_OK,TK_NotStart,A1000,Mobilization,,3304,3304,240,0,0,0,240,0,0,0,,,,2013-09-26 08:00,2013-10-30 17:00,,2012-06-02 08:00,2012-07-05 17:00,2012-06-02 08:00,2012-07-05 17:00,2012-06-02 08:00,2012-07-05 17:00,,2013-09-26 08:00,2013-10-30 17:00,,PT_Normal,,,,,jdY8ce1XRUyBkUbhlqZ/gA,,,,N,0,0,,,2012-06-06 13:54,2012-06-06 13:54,admin,admin
2,138752,4412,21847,5284,1,0,N,N,N,CP_Drtn,TT_Task,DT_FixedDUR2,RV_OK,TK_NotStart,A1020,Excavation,,0,0,80,0,0,0,80,0,0,0,,,,2012-11-06 08:00,2012-11-17 17:00,,2012-11-06 08:00,2012-11-17 17:00,2012-11-06 08:00,2012-11-17 17:00,2012-11-06 08:00,2012-11-17 17:00,,2012-11-06 08:00,2012-11-17 17:00,,PT_Normal,,,,,AhjdBsgxPku2e1pEunaj7w,,,,Y,0,0,,,2012-06-06 13:54,2012-06-06 13:54,admin,admin
3,138753,4412,21847,5284,1,0,N,N,N,CP_Drtn,TT_Task,DT_FixedDUR2,RV_OK,TK_NotStart,A1030,Soil Replacement,,416,0,80,0,0,0,80,0,0,0,,,,2013-01-17 08:00,2013-01-28 17:00,,2012-11-18 08:00,2012-11-28 17:00,2012-11-18 08:00,2012-11-28 17:00,2012-11-18 08:00,2012-11-28 17:00,,2013-01-17 08:00,2013-01-28 17:00,,PT_Normal,,,,,5wjGGUo7YkyC9DSW9v1ruQ,,,,N,0,0,,,2012-06-06 13:54,2012-06-06 13:54,admin,admin
4,138754,4412,21847,5284,1,0,N,N,N,CP_Drtn,TT_Task,DT_FixedDUR2,RV_OK,TK_NotStart,A1040,P.C footings,,416,0,80,0,0,0,80,0,0,0,,,,2013-01-29 08:00,2013-02-09 17:00,,2012-11-29 08:00,2012-12-10 17:00,2012-11-29 08:00,2012-12-10 17:00,2012-11-29 08:00,2012-12-10 17:00,,2013-01-29 08:00,2013-02-09 17:00,,PT_Normal,,,,,B9Vhg4TYdkan+yqWfB1PaQ,,,,N,0,0,,,2012-06-06 13:54,2012-06-06 13:54,admin,admin
5,138755,4412,21847,5284,1,0,N,N,N,CP_Drtn,TT_Task,DT_FixedDUR2,RV_OK,TK_NotStart,A1050,R.C footings,,416,0,112,0,0,0,112,0,0,0,,,,2013-02-10 08:00,2013-02-25 17:00,,2012-12-11 08:00,2012-12-26 17:00,2012-12-11 08:00,2012-12-26 17:00,2012-12-11 08:00,2012-12-26 17:00,,2013-02-10 08:00,2013-02-25 17:00,,PT_Normal,,,,,pyweRKZhhkWslUdsmg72GA,,,,N,0,0,,,2012-06-06 13:54,2012-06-06 13:54,admin,admin
6,138756,4412,21847,5284,1,0,N,N,N,CP_Drtn,TT_Task,DT_FixedDUR2,RV_OK,TK_NotStart,A1060,R.C columns,,416,0,112,0,0,0,112,0,0,0,,,,2013-02-26 08:00,2013-03-13 17:00,,2012-12-27 08:00,2013-01-12 17:00,2012-12-27 08:00,2013-01-12 17:00,2012-12-27 08:00,2013-01-12 17:00,,2013-02-26 08:00,2013-03-13 17:00,,PT_Normal,,,,,JA4XAV6/6UKYDxBoi118uA,,,,N,0,0,,,2012-06-06 13:54,2012-06-06 13:54,admin,admin
7,138757,4412,21847,5284,1,0,N,N,N,CP_Drtn,TT_Task,DT_FixedDUR2,RV_OK,TK_NotStart,A1630,Bituminous insulation,,416,0,56,0,0,0,56,0,0,0,,,,2013-03-14 08:00,2013-03-21 17:00,,2013-01-13 08:00,2013-01-20 17:00,2013-01-13 08:00,2013-01-20 17:00,2013-01-13 08:00,2013-01-20 17:00,,2013-03-14 08:00,2013-03-21 17:00,,PT_Normal,,,,,kaKenFCfRUGMgNcoBNK5XA,,,,N,0,0,,,2012-06-06 13:54,2012-06-06 13:54,admin,admin
8,138758,4412,21847,5284,1,0,N,N,N,CP_Drtn,TT_Task,DT_FixedDUR2,RV_OK,TK_NotStart,A1640,Masonry under slab on grade,,416,0,160,0,0,0,160,0,0,0,,,,2013-03-23 08:00,2013-04-14 17:00,,2013-01-21 08:00,2013-02-12 17:00,2013-01-21 08:00,2013-02-12 17:00,2013-01-21 08:00,2013-02-12 17:00,,2013-03-23 08:00,2013-04-14 17:00,,PT_Normal,,,,,Qsq0PY12/06TNdz07OvoKQ,,,,N,0,0,,,2012-06-06 13:54,2012-06-06 13:54,admin,admin
9,138759,4412,21847,5284,1,0,N,N,N,CP_Drtn,TT_Task,DT_FixedDUR2,RV_OK,TK_NotStart,A1650,Backfilling around foundation,,416,0,112,0,0,0,112,0,0,0,,,,2013-04-15 08:00,2013-04-30 17:00,,2013-02-13 08:00,2013-02-28 17:00,2013-02-13 08:00,2013-02-28 17:00,2013-02-13 08:00,2013-02-28 17:00,,2013-04-15 08:00,2013-04-30 17:00,,PT_Normal,,,,,YL32ADF1PUeX702s3LL4nQ,,,,N,0,0,,,2012-06-06 13:54,2012-06-06 13:54,admin,admin
10,138760,4412,21847,5284,1,0,N,N,N,CP_Drtn,TT_Task,DT_FixedDUR2,RV_OK,TK_NotStart,A1660,Slab on grade,,416,0,112,0,0,0,112,0,0,0,,,,2013-05-01 08:00,2013-05-16 17:00,,2013-03-02 08:00,2013-03-17 17:00,2013-03-02 08:00,2013-03-17 17:00,2013-03-02 08:00,2013-03-17 17:00,,2013-05-01 08:00,2013-05-16 17:00,,PT_Normal,,,,,TLV8vRzpekCKr6mUqbkGdQ,,,,N,0,0,,,2012-06-06 13:54,2012-06-06 13:54,admin,admin
11,138761,4412,21847,5284,1,0,N,N,N,CP_Drtn,TT_Task,DT_FixedDUR2,RV_OK,TK_NotStart,A1670,Ground floor R.C slab,,416,0,160,0,0,0,160,0,0,0,,,,2013-05-18 08:00,2013-06-09 17:00,,2013-03-18 08:00,2013-04-09 17:00,2013-03-18 08:00,2013-04-09 17:00,2013-03-18 08:00,2013-04-09 17:00,,2013-05-18 08:00,2013-06-09 17:00,,PT_Normal,,,,,Hc0b4HIt30umXDFKngALJw,,,,N,0,0,,,2012-06-06 13:54,2012-06-06 13:54,admin,admin
12,138762,4412,21847,5284,1,0,N,N,N,CP_Drtn,TT_Task,DT_FixedDUR2,RV_OK,TK_NotStart,A1680,Steel structure erection,,416,0,200,0,0,0,200,0,0,0,,,,2013-06-10 08:00,2013-07-08 17:00,,2013-04-10 08:00,2013-05-08 17:00,2013-04-10 08:00,2013-05-08 17:00,2013-04-10 08:00,2013-05-08 17:00,,2013-06-10 08:00,2013-07-08 17:00,,PT_Normal,,,,,+F4sj3MTrkaWWVEc4TOxvw,,,,N,0,0,,,2012-06-06 13:54,2012-06-06 13:54,admin,admin
13,138763,4412,21849,5284,1,0,N,N,N,CP_Drtn,TT_Task,DT_FixedDUR2,RV_OK,TK_NotStart,A1070,Excavation,,0,0,80,0,0,0,80,0,0,0,,,,2012-08-16 08:00,2012-08-27 17:00,,2012-08-16 08:00,2012-08-27 17:00,2012-08-16 08:00,2012-08-27 17:00,2012-08-16 08:00,2012-08-27 17:00,,2012-08-16 08:00,2012-08-27 17:00,,PT_Normal,,,,,Gff05UijBU+qrjl7PsD8oA,,,,Y,0,0,,,2012-06-06 13:54,2012-06-06 13:54,admin,admin
14,138764,4412,21849,5284,1,0,N,N,N,CP_Drtn,TT_Task,DT_FixedDUR2,RV_OK,TK_NotStart,A1080,Soil Replacement,,1000,0,56,0,0,0,56,0,0,0,,,,2013-01-21 08:00,2013-01-28 17:00,,2012-08-28 08:00,2012-09-04 17:00,2012-08-28 08:00,2012-09-04 17:00,2012-08-28 08:00,2012-09-04 17:00,,2013-01-21 08:00,2013-01-28 17:00,,PT_Normal,,,,,AQdsFb39Ikea7CaSKiUsHQ,,,,N,0,0,,,2012-06-06 13:54,2012-06-06 13:54,admin,admin
15,138765,4412,21849,5284,1,0,N,N,N,CP_Drtn,TT_Task,DT_FixedDUR2,RV_OK,TK_NotStart,A1090,P.C footings,,1000,0,80,0,0,0,80,0,0,0,,,,2013-01-29 08:00,2013-02-09 17:00,,2012-09-05 08:00,2012-09-16 17:00,2012-09-05 08:00,2012-09-16 17:00,2012-09-05 08:00,2012-09-16 17:00,,2013-01-29 08:00,2013-02-09 17:00,,PT_Normal,,,,,Rx3xM0NEe0yND4jmicSxKg,,,,N,0,0,,,2012-06-06 13:54,2012-06-06 13:54,admin,admin
16,138766,4412,21849,5284,1,0,N,N,N,CP_Drtn,TT_Task,DT_FixedDUR2,RV_OK,TK_NotStart,A1100,R.C footings,,1000,0,112,0,0,0,112,0,0,0,,,,2013-02-10 08:00,2013-02-25 17:00,,2012-09-17 08:00,2012-10-02 17:00,2012-09-17 08:00,2012-10-02 17:00,2012-09-17 08:00,2012-10-02 17:00,,2013-02-10 08:00,2013-02-25 17:00,,PT_Normal,,,,,X0mAZ7tOw0erR/0kpu9ZLg,,,,N,0,0,,,2012-06-06 13:54,2012-06-06 13:54,admin,admin
17,138767,4412,21849,5284,1,0,N,N,N,CP_Drtn,TT_Task,DT_FixedDUR2,RV_OK,TK_NotStart,A1110,R.C columns,,1000,0,112,0,0,0,112,0,0,0,,,,2013-02-26 08:00,2013-03-13 17:00,,2012-10-03 08:00,2012-10-18 17:00,2012-10-03 08:00,2012-10-18 17:00,2012-10-03 08:00,2012-10-18 17:00,,2013-02-26 08:00,2013-03-13 17:00,,PT_Normal,,,,,u+5ox0HdxUig0CLZPMKcww,,,,N,0,0,,,2012-06-06 13:54,2012-06-06 13:54,admin,admin
18,138768,4412,21849,5284,1,0,N,N,N,CP_Drtn,TT_Task,DT_FixedDUR2,RV_OK,TK_NotStart,A1120,Bituminous insulation,,1000,0,56,0,0,0,56,0,0,0,,,,2013-03-14 08:00,2013-03-21 17:00,,2012-10-20 08:00,2012-10-27 17:00,2012-10-20 08:00,2012-10-27 17:00,2012-10-20 08:00,2012-10-27 17:00,,2013-03-14 08:00,2013-03-21 17:00,,PT_Normal,,,,,OoAVr19/gk6bdB1ci8ITkA,,,,N,0,0,,,2012-06-06 13:54,2012-06-06 13:54,admin,admin
19,138769,4412,21849,5284,1,0,N,N,N,CP_Drtn,TT_Task,DT_FixedDUR2,RV_OK,TK_NotStart,A1130,Masonry under slab on grade,,1000,0,112,0,0,0,112,0,0,0,,,,2013-03-23 08:00,2013-04-07 17:00,,2012-10-28 08:00,2012-11-12 17:00,2012-10-28 08:00,2012-11-12 17:00,2012-10-28 08:00,2012-11-12 17:00,,2013-03-23 08:00,2013-04-07 17:00,,PT_Normal,,,,,OW+JPCVOykOaluxucWF1xw,,,,N,0,0,,,2012-06-06 13:54,2012-06-06 13:54,admin,admin
20,138770,4412,21849,5284,1,0,N,N,N,CP_Drtn,TT_Task,DT_FixedDUR2,RV_OK,TK_NotStart,A1140,Backfilling around foundation,,1000,0,112,0,0,0,112,0,0,0,,,,2013-04-08 08:00,2013-04-23 17:00,,2012-11-13 08:00,2012-11-28 17:00,2012-11-13 08:00,2012-11-28 17:00,2012-11-13 08:00,2012-11-28 17:00,,2013-04-08 08:00,2013-04-23 17:00,,PT_Normal,,,,,lVe6W/necUSwWh9Kn0Ognw,,,,N,0,0,,,2012-06-06 13:54,2012-06-06 13:54,admin,admin
21,138771,4412,21849,5284,1,0,N,N,N,CP_Drtn,TT_Task,DT_FixedDUR2,RV_OK,TK_NotStart,A1150,Slab on grade,,1000,0,112,0,0,0,112,0,0,0,,,,2013-04-24 08:00,2013-05-09 17:00,,2012-11-29 08:00,2012-12-15 17:00,2012-11-29 08:00,2012-12-15 17:00,2012-11-29 08:00,2012-12-15 17:00,,2013-04-24 08:00,2013-05-09 17:00,,PT_Normal,,,,,teQwFGJOtUu+3htOQXONIg,,,,N,0,0,,,2012-06-06 13:54,2012-06-06 13:54,admin,admin
22,138772,4412,21849,5284,1,0,N,N,N,CP_Drtn,TT_Task,DT_FixedDUR2,RV_OK,TK_NotStart,A1160,Ground floor R.C slab,,1000,0,144,0,0,0,144,0,0,0,,,,2013-05-11 08:00,2013-05-30 17:00,,2012-12-16 08:00,2013-01-05 17:00,2012-12-16 08:00,2013-01-05 17:00,2012-12-16 08:00,2013-01-05 17:00,,2013-05-11 08:00,2013-05-30 17:00,,PT_Normal,,,,,TsWKLw7LxEClXyWPZCTQ7w,,,,N,0,0,,,2012-06-06 13:54,2012-06-06 13:54,admin,admin
23,138773,4412,21849,5284,1,0,N,N,N,CP_Drtn,TT_Task,DT_FixedDUR2,RV_OK,TK_NotStart,A1170,Steel structure erection,,1000,0,240,0,0,0,240,0,0,0,,,,2013-06-01 08:00,2013-07-04 17:00,,2013-01-06 08:00,2013-02-09 17:00,2013-01-06 08:00,2013-02-09 17:00,2013-01-06 08:00,2013-02-09 17:00,,2013-06-01 08:00,2013-07-04 17:00,,PT_Normal,,,,,xmzMCVTbqUGyGOQYpOL52w,,,,N,0,0,,,2012-06-06 13:54,2012-06-06 13:54,admin,admin
24,138774,4412,21850,5284,1,0,N,N,N,CP_Drtn,TT_Task,DT_FixedDUR2,RV_OK,TK_NotStart,A1180,Excavation,,0,0,80,0,0,0,80,0,0,0,,,,2012-10-02 08:00,2012-10-13 17:00,,2012-10-02 08:00,2012-10-13 17:00,2012-10-02 08:00,2012-10-13 17:00,2012-10-02 08:00,2012-10-13 17:00,,2012-10-02 08:00,2012-10-13 17:00,,PT_Normal,,,,,4UXZp8CMmU6Dmj0kI6hsdA,,,,Y,0,0,,,2012-06-06 13:54,2012-06-06 13:54,admin,admin
25,138775,4412,21850,5284,1,0,N,N,N,CP_Drtn,TT_Task,DT_FixedDUR2,RV_OK,TK_NotStart,A1190,Soil Replacement,,768,0,56,0,0,0,56,0,0,0,,,,2013-02-03 08:00,2013-02-10 17:00,,2012-10-14 08:00,2012-10-21 17:00,2012-10-14 08:00,2012-10-21 17:00,2012-10-14 08:00,2012-10-21 17:00,,2013-02-03 08:00,2013-02-10 17:00,,PT_Normal,,,,,o7eljElG4ECchhhqT94Tuw,,,,N,0,0,,,2012-06-06 13:54,2012-06-06 13:54,admin,admin
26,138776,4412,21850,5284,1,0,N,N,N,CP_Drtn,TT_Task,DT_FixedDUR2,RV_OK,TK_NotStart,A1200,P.C footings,,768,0,80,0,0,0,80,0,0,0,,,,2013-02-11 08:00,2013-02-21 17:00,,2012-10-22 08:00,2012-11-01 17:00,2012-10-22 08:00,2012-11-01 17:00,2012-10-22 08:00,2012-11-01 17:00,,2013-02-11 08:00,2013-02-21 17:00,,PT_Normal,,,,,rW1gJO38iUme2jcqqusgEw,,,,N,0,0,,,2012-06-06 13:54,2012-06-06 13:54,admin,admin
27,138777,4412,21850,5284,1,0,N,N,N,CP_Drtn,TT_Task,DT_FixedDUR2,RV_OK,TK_NotStart,A1210,R.C footings,,768,0,112,0,0,0,112,0,0,0,,,,2013-02-23 08:00,2013-03-10 17:00,,2012-11-03 08:00,2012-11-18 17:00,2012-11-03 08:00,2012-11-18 17:00,2012-11-03 08:00,2012-11-18 17:00,,2013-02-23 08:00,2013-03-10 17:00,,PT_Normal,,,,,5CD2nd/dwkeSUplewoI32g,,,,N,0,0,,,2012-06-06 13:54,2012-06-06 13:54,admin,admin
28,138778,4412,21850,5284,1,0,N,N,N,CP_Drtn,TT_Task,DT_FixedDUR2,RV_OK,TK_NotStart,A1740,R.C columns,,768,0,112,0,0,0,112,0,0,0,,,,2013-03-11 08:00,2013-03-26 17:00,,2012-11-19 08:00,2012-12-04 17:00,2012-11-19 08:00,2012-12-04 17:00,2012-11-19 08:00,2012-12-04 17:00,,2013-03-11 08:00,2013-03-26 17:00,,PT_Normal,,,,,o19sgtbCfUmptdauA+nE7w,,,,N,0,0,,,2012-06-06 13:54,2012-06-06 13:54,admin,admin
29,138779,4412,21850,5284,1,0,N,N,N,CP_Drtn,TT_Task,DT_FixedDUR2,RV_OK,TK_NotStart,A1750,Bituminous insulation,,768,0,56,0,0,0,56,0,0,0,,,,2013-03-27 08:00,2013-04-03 17:00,,2012-12-05 08:00,2012-12-12 17:00,2012-12-05 08:00,2012-12-12 17:00,2012-12-05 08:00,2012-12-12 17:00,,2013-03-27 08:00,2013-04-03 17:00,,PT_Normal,,,,,F0leNIGszUi6BZ2BwMYwew,,,,N,0,0,,,2012-06-06 13:54,2012-06-06 13:54,admin,admin
30,138780,4412,21850,5284,1,0,N,N,N,CP_Drtn,TT_Task,DT_FixedDUR2,RV_OK,TK_NotStart,A1760,Masonry under slab on grade,,768,0,112,0,0,0,112,0,0,0,,,,2013-04-04 08:00,2013-04-20 17:00,,2012-12-13 08:00,2012-12-29 17:00,2012-12-13 08:00,2012-12-29 17:00,2012-12-13 08:00,2012-12-29 17:00,,2013-04-04 08:00,2013-04-20 17:00,,PT_Normal,,,,,4rqxoJWJQEesE1ad4IbvMw,,,,N,0,0,,,2012-06-06 13:54,2012-06-06 13:54,admin,admin
31,138781,4412,21850,5284,1,0,N,N,N,CP_Drtn,TT_Task,DT_FixedDUR2,RV_OK,TK_NotStart,A1770,Backfilling around foundation,,768,0,112,0,0,0,112,0,0,0,,,,2013-04-21 08:00,2013-05-06 17:00,,2012-12-30 08:00,2013-01-14 17:00,2012-12-30 08:00,2013-01-14 17:00,2012-12-30 08:00,2013-01-14 17:00,,2013-04-21 08:00,2013-05-06 17:00,,PT_Normal,,,,,OXl4XxSVeEuAKke+7sTDeA,,,,N,0,0,,,2012-06-06 13:54,2012-06-06 13:54,admin,admin
32,138782,4412,21850,5284,1,0,N,N,N,CP_Drtn,TT_Task,DT_FixedDUR2,RV_OK,TK_NotStart,A1780,Slab on grade,,768,0,112,0,0,0,112,0,0,0,,,,2013-05-07 08:00,2013-05-22 17:00,,2013-01-15 08:00,2013-01-30 17:00,2013-01-15 08:00,2013-01-30 17:00,2013-01-15 08:00,2013-01-30 17:00,,2013-05-07 08:00,2013-05-22 17:00,,PT_Normal,,,,,9H/RhZAs6EqsFSeiMgFpwA,,,,N,0,0,,,2012-06-06 13:54,2012-06-06 13:54,admin,admin
33,138783,4412,21850,5284,1,0,N,N,N,CP_Drtn,TT_Task,DT_FixedDUR2,RV_OK,TK_NotStart,A1790,Ground floor R.C slab,,768,0,160,0,0,0,160,0,0,0,,,,2013-05-23 08:00,2013-06-15 17:00,,2013-01-31 08:00,2013-02-23 17:00,2013-01-31 08:00,2013-02-23 17:00,2013-01-31 08:00,2013-02-23 17:00,,2013-05-23 08:00,2013-06-15 17:00,,PT_Normal,,,,,BGJR+OMYw0CVTEHRsaySeg,,,,N,0,0,,,2012-06-06 13:54,2012-06-06 13:54,admin,admin
34,138784,4412,21850,5284,1,0,N,N,N,CP_Drtn,TT_Task,DT_FixedDUR2,RV_OK,TK_NotStart,A1800,Steel structure erection,,768,0,240,0,0,0,240,0,0,0,,,,2013-06-16 08:00,2013-07-20 17:00,,2013-02-24 08:00,2013-03-30 17:00,2013-02-24 08:00,2013-03-30 17:00,2013-02-24 08:00,2013-03-30 17:00,,2013-06-16 08:00,2013-07-20 17:00,,PT_Normal,,,,,golXF/dr+06Bpf+maWARBQ,,,,N,0,0,,,2012-06-06 13:54,2012-06-06 13:54,admin,admin
35,138785,4412,21851,5284,1,0,N,N,N,CP_Drtn,TT_Task,DT_FixedDUR2,RV_OK,TK_NotStart,A1810,Corrugated sheets installation,,1312,1312,160,0,0,0,160,0,0,0,,,,2013-10-08 08:00,2013-10-30 17:00,,2013-03-31 08:00,2013-04-22 17:00,2013-03-31 08:00,2013-04-22 17:00,2013-03-31 08:00,2013-04-22 17:00,,2013-10-08 08:00,2013-10-30 17:00,,PT_Normal,,,,,6t/K/1uCU0CbkdlClLzm+A,,,,N,0,0,,,2012-06-06 13:54,2012-06-06 13:54,admin,admin
36,138786,4412,21852,5284,1,0,N,N,N,CP_Drtn,TT_Task,DT_FixedDUR2,RV_OK,TK_NotStart,A1220,Excavation,,0,0,80,0,0,0,80,0,0,0,,,,2012-07-01 08:00,2012-07-11 17:00,,2012-07-01 08:00,2012-07-11 17:00,2012-07-01 08:00,2012-07-11 17:00,2012-07-01 08:00,2012-07-11 17:00,,2012-07-01 08:00,2012-07-11 17:00,,PT_Normal,,,,,DbisaSCeLk6CKfZRFhWo2A,,,,Y,0,0,,,2012-06-06 13:54,2012-06-06 13:54,admin,admin
37,138787,4412,21852,5284,1,0,N,N,N,CP_Drtn,TT_Task,DT_FixedDUR2,RV_OK,TK_NotStart,A1230,Soil replacement,,952,0,56,0,0,0,56,0,0,0,,,,2012-11-28 08:00,2012-12-05 17:00,,2012-07-12 08:00,2012-07-19 17:00,2012-07-12 08:00,2012-07-19 17:00,2012-07-12 08:00,2012-07-19 17:00,,2012-11-28 08:00,2012-12-05 17:00,,PT_Normal,,,,,v+dCHdD3+U2DRE1hHDcKDA,,,,N,0,0,,,2012-06-06 13:54,2012-06-06 13:54,admin,admin
38,138788,4412,21852,5284,1,0,N,N,N,CP_Drtn,TT_Task,DT_FixedDUR2,RV_OK,TK_NotStart,A1240,P.C footings,,952,0,80,0,0,0,80,0,0,0,,,,2012-12-06 08:00,2012-12-17 17:00,,2012-07-21 08:00,2012-07-31 17:00,2012-07-21 08:00,2012-07-31 17:00,2012-07-21 08:00,2012-07-31 17:00,,2012-12-06 08:00,2012-12-17 17:00,,PT_Normal,,,,,wEcqajnDFUOXocnImJbQKQ,,,,N,0,0,,,2012-06-06 13:54,2012-06-06 13:54,admin,admin
39,138789,4412,21852,5284,1,0,N,N,N,CP_Drtn,TT_Task,DT_FixedDUR2,RV_OK,TK_NotStart,A1820,R.C footings,,952,0,112,0,0,0,112,0,0,0,,,,2012-12-18 08:00,2013-01-02 17:00,,2012-08-01 08:00,2012-08-16 17:00,2012-08-01 08:00,2012-08-16 17:00,2012-08-01 08:00,2012-08-16 17:00,,2012-12-18 08:00,2013-01-02 17:00,,PT_Normal,,,,,FripxWUBBEeO7pXIcCQ5VQ,,,,N,0,0,,,2012-06-06 13:54,2012-06-06 13:54,admin,admin
40,138790,4412,21852,5284,1,0,N,N,N,CP_Drtn,TT_Task,DT_FixedDUR2,RV_OK,TK_NotStart,A1830,R.C columns,,952,0,112,0,0,0,112,0,0,0,,,,2013-01-03 08:00,2013-01-19 17:00,,2012-08-18 08:00,2012-09-02 17:00,2012-08-18 08:00,2012-09-02 17:00,2012-08-18 08:00,2012-09-02 17:00,,2013-01-03 08:00,2013-01-19 17:00,,PT_Normal,,,,,Zwb8jUVadEC3aIabUH6tkw,,,,N,0,0,,,2012-06-06 13:54,2012-06-06 13:54,admin,admin
41,138791,4412,21852,5284,1,0,N,N,N,CP_Drtn,TT_Task,DT_FixedDUR2,RV_OK,TK_NotStart,A1840,Bituminous insulation,,952,0,56,0,0,0,56,0,0,0,,,,2013-01-20 08:00,2013-01-27 17:00,,2012-09-03 08:00,2012-09-10 17:00,2012-09-03 08:00,2012-09-10 17:00,2012-09-03 08:00,2012-09-10 17:00,,2013-01-20 08:00,2013-01-27 17:00,,PT_Normal,,,,,E5XhMj12lEyu2VSkUOGUOA,,,,N,0,0,,,2012-06-06 13:54,2012-06-06 13:54,admin,admin
42,138792,4412,21852,5284,1,0,N,N,N,CP_Drtn,TT_Task,DT_FixedDUR2,RV_OK,TK_NotStart,A1850,Masonry under slab on grade,,952,0,112,0,0,0,112,0,0,0,,,,2013-01-28 08:00,2013-02-12 17:00,,2012-09-11 08:00,2012-09-26 17:00,2012-09-11 08:00,2012-09-26 17:00,2012-09-11 08:00,2012-09-26 17:00,,2013-01-28 08:00,2013-02-12 17:00,,PT_Normal,,,,,ATejZxSonEC1W1K4olhzCw,,,,N,0,0,,,2012-06-06 13:54,2012-06-06 13:54,admin,admin
43,138793,4412,21852,5284,1,0,N,N,N,CP_Drtn,TT_Task,DT_FixedDUR2,RV_OK,TK_NotStart,A1860,Backfilling around foundation,,952,0,112,0,0,0,112,0,0,0,,,,2013-02-13 08:00,2013-02-28 17:00,,2012-09-27 08:00,2012-10-13 17:00,2012-09-27 08:00,2012-10-13 17:00,2012-09-27 08:00,2012-10-13 17:00,,2013-02-13 08:00,2013-02-28 17:00,,PT_Normal,,,,,3210eb92j0qvQ/jC8eNiaw,,,,N,0,0,,,2012-06-06 13:54,2012-06-06 13:54,admin,admin
44,138794,4412,21852,5284,1,0,N,N,N,CP_Drtn,TT_Task,DT_FixedDUR2,RV_OK,TK_NotStart,A1870,Slab on grade,,952,0,112,0,0,0,112,0,0,0,,,,2013-03-02 08:00,2013-03-17 17:00,,2012-10-14 08:00,2012-10-29 17:00,2012-10-14 08:00,2012-10-29 17:00,2012-10-14 08:00,2012-10-29 17:00,,2013-03-02 08:00,2013-03-17 17:00,,PT_Normal,,,,,bliY1dCPhE+H+6zi4WHavw,,,,N,0,0,,,2012-06-06 13:54,2012-06-06 13:54,admin,admin
45,138795,4412,21852,5284,1,0,N,N,N,CP_Drtn,TT_Task,DT_FixedDUR2,RV_OK,TK_NotStart,A1880,Ground floor R.C slab,,952,0,160,0,0,0,160,0,0,0,,,,2013-03-18 08:00,2013-04-09 17:00,,2012-10-30 08:00,2012-11-21 17:00,2012-10-30 08:00,2012-11-21 17:00,2012-10-30 08:00,2012-11-21 17:00,,2013-03-18 08:00,2013-04-09 17:00,,PT_Normal,,,,,YQ99JYC7gU21Ci7my41bbQ,,,,N,0,0,,,2012-06-06 13:54,2012-06-06 13:54,admin,admin
46,138796,4412,21852,5284,1,0,N,N,N,CP_Drtn,TT_Task,DT_FixedDUR2,RV_OK,TK_NotStart,A1890,Steel structure erection,,952,0,240,0,0,0,240,0,0,0,,,,2013-04-10 08:00,2013-05-14 17:00,,2012-11-22 08:00,2012-12-26 17:00,2012-11-22 08:00,2012-12-26 17:00,2012-11-22 08:00,2012-12-26 17:00,,2013-04-10 08:00,2013-05-14 17:00,,PT_Normal,,,,,UAxq6tZNEUCdmtH+tSgYpQ,,,,N,0,0,,,2012-06-06 13:54,2012-06-06 13:54,admin,admin
47,138797,4412,21864,5284,1,0,N,N,N,CP_Drtn,TT_Task,DT_FixedDUR2,RV_OK,TK_NotStart,A1250,Excavation,,0,0,80,0,0,0,80,0,0,0,,,,2012-11-29 08:00,2012-12-10 17:00,,2012-11-29 08:00,2012-12-10 17:00,2012-11-29 08:00,2012-12-10 17:00,2012-11-29 08:00,2012-12-10 17:00,,2012-11-29 08:00,2012-12-10 17:00,,PT_Normal,,,,,snTY+sdFOUG8WZ9VV1yffQ,,,,Y,0,0,,,2012-06-06 13:54,2012-06-06 13:54,admin,admin
48,138798,4412,21864,5284,1,0,N,N,N,CP_Drtn,TT_Task,DT_FixedDUR2,RV_OK,TK_NotStart,A1260,Soil replacement,,0,0,80,0,0,0,80,0,0,0,,,,2012-12-11 08:00,2012-12-22 17:00,,2012-12-11 08:00,2012-12-22 17:00,2012-12-11 08:00,2012-12-22 17:00,2012-12-11 08:00,2012-12-22 17:00,,2012-12-11 08:00,2012-12-22 17:00,,PT_Normal,,,,,FsSJ8XLmkEqy3WkHcj2LyA,,,,Y,0,0,,,2012-06-06 13:54,2012-06-06 13:54,admin,admin
49,138799,4412,21864,5284,1,0,N,N,N,CP_Drtn,TT_Task,DT_FixedDUR2,RV_OK,TK_NotStart,A1270,P.C footings,,0,0,80,0,0,0,80,0,0,0,,,,2012-12-23 08:00,2013-01-02 17:00,,2012-12-23 08:00,2013-01-02 17:00,2012-12-23 08:00,2013-01-02 17:00,2012-12-23 08:00,2013-01-02 17:00,,2012-12-23 08:00,2013-01-02 17:00,,PT_Normal,,,,,20khFAnU2kOcyi/bvUBj3Q,,,,Y,0,0,,,2012-06-06 13:54,2012-06-06 13:54,admin,admin
50,138800,4412,21864,5284,1,0,N,N,N,CP_Drtn,TT_Task,DT_FixedDUR2,RV_OK,TK_NotStart,A1280,R.C footings,,0,0,112,0,0,0,112,0,0,0,,,,2013-01-03 08:00,2013-01-19 17:00,,2013-01-03 08:00,2013-01-19 17:00,2013-01-03 08:00,2013-01-19 17:00,2013-01-03 08:00,2013-01-19 17:00,,2013-01-03 08:00,2013-01-19 17:00,,PT_Normal,,,,,e9l78gajhkmwopuGrYPJzQ,,,,Y,0,0,,,2012-06-06 13:54,2012-06-06 13:54,admin,admin
51,138801,4412,21864,5284,1,0,N,N,N,CP_Drtn,TT_Task,DT_FixedDUR2,RV_OK,TK_NotStart,A1920,R.C columns,,0,0,112,0,0,0,112,0,0,0,,,,2013-01-20 08:00,2013-02-04 17:00,,2013-01-20 08:00,2013-02-04 17:00,2013-01-20 08:00,2013-02-04 17:00,2013-01-20 08:00,2013-02-04 17:00,,2013-01-20 08:00,2013-02-04 17:00,,PT_Normal,,,,,/5KJmfW7s02gC6RVUBF8Tw,,,,Y,0,0,,,2012-06-06 13:54,2012-06-06 13:54,admin,admin
52,138802,4412,21864,5284,1,0,N,N,N,CP_Drtn,TT_Task,DT_FixedDUR2,RV_OK,TK_NotStart,A1930,Bituminous insulation,,0,0,80,0,0,0,80,0,0,0,,,,2013-02-05 08:00,2013-02-16 17:00,,2013-02-05 08:00,2013-02-16 17:00,2013-02-05 08:00,2013-02-16 17:00,2013-02-05 08:00,2013-02-16 17:00,,2013-02-05 08:00,2013-02-16 17:00,,PT_Normal,,,,,Jr5reIgfj0i1yND3lwzjyA,,,,Y,0,0,,,2012-06-06 13:54,2012-06-06 13:54,admin,admin
53,138803,4412,21864,5284,1,0,N,N,N,CP_Drtn,TT_Task,DT_FixedDUR2,RV_OK,TK_NotStart,A1940,Masonry under slab on grade,,0,0,160,0,0,0,160,0,0,0,,,,2013-02-17 08:00,2013-03-11 17:00,,2013-02-17 08:00,2013-03-11 17:00,2013-02-17 08:00,2013-03-11 17:00,2013-02-17 08:00,2013-03-11 17:00,,2013-02-17 08:00,2013-03-11 17:00,,PT_Normal,,,,,5fOGAmwIvUqiYg/s2K/DAQ,,,,Y,0,0,,,2012-06-06 13:54,2012-06-06 13:54,admin,admin
54,138804,4412,21864,5284,1,0,N,N,N,CP_Drtn,TT_Task,DT_FixedDUR2,RV_OK,TK_NotStart,A1950,Backfilling around foundation,,0,0,56,0,0,0,56,0,0,0,,,,2013-03-12 08:00,2013-03-19 17:00,,2013-03-12 08:00,2013-03-19 17:00,2013-03-12 08:00,2013-03-19 17:00,2013-03-12 08:00,2013-03-19 17:00,,2013-03-12 08:00,2013-03-19 17:00,,PT_Normal,,,,,TDOI8mtiiUiiiGgmsJOE5A,,,,Y,0,0,,,2012-06-06 13:54,2012-06-06 13:54,admin,admin
55,138805,4412,21864,5284,1,0,N,N,N,CP_Drtn,TT_Task,DT_FixedDUR2,RV_OK,TK_NotStart,A1960,Slab on grade,,0,0,24,0,0,0,24,0,0,0,,,,2013-03-20 08:00,2013-03-23 17:00,,2013-03-20 08:00,2013-03-23 17:00,2013-03-20 08:00,2013-03-23 17:00,2013-03-20 08:00,2013-03-23 17:00,,2013-03-20 08:00,2013-03-23 17:00,,PT_Normal,,,,,N+FmR7GyxUqEPfaDHOIj7w,,,,Y,0,0,,,2012-06-06 13:54,2012-06-06 13:54,admin,admin
56,138806,4412,21864,5284,1,0,N,N,N,CP_Drtn,TT_Task,DT_FixedDUR2,RV_OK,TK_NotStart,A1970,Ground floor R.C slab,,0,0,160,0,0,0,160,0,0,0,,,,2013-03-24 08:00,2013-04-15 17:00,,2013-03-24 08:00,2013-04-15 17:00,2013-03-24 08:00,2013-04-15 17:00,2013-03-24 08:00,2013-04-15 17:00,,2013-03-24 08:00,2013-04-15 17:00,,PT_Normal,,,,,w2uf+7esZkG/eCYDjxp6RA,,,,Y,0,0,,,2012-06-06 13:54,2012-06-06 13:54,admin,admin
57,138807,4412,21860,5284,1,0,N,N,N,CP_Drtn,TT_Task,DT_FixedDUR2,RV_OK,TK_NotStart,A1980,First floor columns,,0,0,112,0,0,0,112,0,0,0,,,,2013-04-16 08:00,2013-05-01 17:00,,2013-04-16 08:00,2013-05-01 17:00,2013-04-16 08:00,2013-05-01 17:00,2013-04-16 08:00,2013-05-01 17:00,,2013-04-16 08:00,2013-05-01 17:00,,PT_Normal,,,,,ZQbUThkirkKbnMfzzwPBww,,,,Y,0,0,,,2012-06-06 13:54,2012-06-06 13:54,admin,admin
58,138808,4412,21860,5284,1,0,N,N,N,CP_Drtn,TT_Task,DT_FixedDUR2,RV_OK,TK_NotStart,A1990,First floor slab,,0,0,160,0,0,0,160,0,0,0,,,,2013-05-02 08:00,2013-05-25 17:00,,2013-05-02 08:00,2013-05-25 17:00,2013-05-02 08:00,2013-05-25 17:00,2013-05-02 08:00,2013-05-25 17:00,,2013-05-02 08:00,2013-05-25 17:00,,PT_Normal,,,,,SpVYPL1d30eXhVekwBRYGA,,,,Y,0,0,,,2012-06-06 13:54,2012-06-06 13:54,admin,admin
59,138809,4412,21861,5284,1,0,N,N,N,CP_Drtn,TT_Task,DT_FixedDUR2,RV_OK,TK_NotStart,A2000,Second floor columns,,0,0,112,0,0,0,112,0,0,0,,,,2013-05-26 08:00,2013-06-10 17:00,,2013-05-26 08:00,2013-06-10 17:00,2013-05-26 08:00,2013-06-10 17:00,2013-05-26 08:00,2013-06-10 17:00,,2013-05-26 08:00,2013-06-10 17:00,,PT_Normal,,,,,4xcDXZUCgUW1Msi8Wu8L7A,,,,Y,0,0,,,2012-06-06 13:54,2012-06-06 13:54,admin,admin
60,138810,4412,21861,5284,1,0,N,N,N,CP_Drtn,TT_Task,DT_FixedDUR2,RV_OK,TK_NotStart,A2010,Second floor slab,,0,0,144,0,0,0,144,0,0,0,,,,2013-06-11 08:00,2013-07-01 17:00,,2013-06-11 08:00,2013-07-01 17:00,2013-06-11 08:00,2013-07-01 17:00,2013-06-11 08:00,2013-07-01 17:00,,2013-06-11 08:00,2013-07-01 17:00,,PT_Normal,,,,,aydNozC9skyZb9mtLhFOMw,,,,Y,0,0,,,2012-06-06 13:54,2012-06-06 13:54,admin,admin
61,138811,4412,21862,5284,1,0,N,N,N,CP_Drtn,TT_Task,DT_FixedDUR2,RV_OK,TK_NotStart,A2020,Third floor columns,,0,0,96,0,0,0,96,0,0,0,,,,2013-07-02 08:00,2013-07-15 17:00,,2013-07-02 08:00,2013-07-15 17:00,2013-07-02 08:00,2013-07-15 17:00,2013-07-02 08:00,2013-07-15 17:00,,2013-07-02 08:00,2013-07-15 17:00,,PT_Normal,,,,,cx/8s3WXW0aTPiZ+MO2RzA,,,,Y,0,0,,,2012-06-06 13:54,2012-06-06 13:54,admin,admin
62,138812,4412,21862,5284,1,0,N,N,N,CP_Drtn,TT_Task,DT_FixedDUR2,RV_OK,TK_NotStart,A2030,Third floor slab,,0,0,128,0,0,0,128,0,0,0,,,,2013-07-16 08:00,2013-08-03 17:00,,2013-07-16 08:00,2013-08-03 17:00,2013-07-16 08:00,2013-08-03 17:00,2013-07-16 08:00,2013-08-03 17:00,,2013-07-16 08:00,2013-08-03 17:00,,PT_Normal,,,,,g8+trhxPPkSI3Q+tgSZxpA,,,,Y,0,0,,,2012-06-06 13:54,2012-06-06 13:54,admin,admin
63,138813,4412,21836,5284,1,0,N,N,N,CP_Drtn,TT_Task,DT_FixedDUR2,RV_OK,TK_NotStart,A1290,Excavation,,688,0,56,0,0,0,56,0,0,0,,,,2013-03-16 08:00,2013-03-23 17:00,,2012-12-05 08:00,2012-12-12 17:00,2012-12-05 08:00,2012-12-12 17:00,2012-12-05 08:00,2012-12-12 17:00,,2013-03-16 08:00,2013-03-23 17:00,,PT_Normal,,,,,mTi80ZrzSEqY/tGlRz1ZZA,,,,N,0,0,,,2012-06-06 13:54,2012-06-06 13:54,admin,admin
64,138814,4412,21836,5284,1,0,N,N,N,CP_Drtn,TT_Task,DT_FixedDUR2,RV_OK,TK_NotStart,A1300,Soil Replacement,,688,0,56,0,0,0,56,0,0,0,,,,2013-03-24 08:00,2013-03-31 17:00,,2012-12-13 08:00,2012-12-20 17:00,2012-12-13 08:00,2012-12-20 17:00,2012-12-13 08:00,2012-12-20 17:00,,2013-03-24 08:00,2013-03-31 17:00,,PT_Normal,,,,,ym9QtVbtwE2e+CzUhdFwXg,,,,N,0,0,,,2012-06-06 13:54,2012-06-06 13:54,admin,admin
65,138815,4412,21836,5284,1,0,N,N,N,CP_Drtn,TT_Task,DT_FixedDUR2,RV_OK,TK_NotStart,A1310,P.C footings,,688,0,56,0,0,0,56,0,0,0,,,,2013-04-01 08:00,2013-04-08 17:00,,2012-12-22 08:00,2012-12-29 17:00,2012-12-22 08:00,2012-12-29 17:00,2012-12-22 08:00,2012-12-29 17:00,,2013-04-01 08:00,2013-04-08 17:00,,PT_Normal,,,,,01meWROi6Um5NfeDUP4iQw,,,,N,0,0,,,2012-06-06 13:54,2012-06-06 13:54,admin,admin
66,138816,4412,21836,5284,1,0,N,N,N,CP_Drtn,TT_Task,DT_FixedDUR2,RV_OK,TK_NotStart,A1320,R.C footings,,688,0,112,0,0,0,112,0,0,0,,,,2013-04-09 08:00,2013-04-24 17:00,,2012-12-30 08:00,2013-01-14 17:00,2012-12-30 08:00,2013-01-14 17:00,2012-12-30 08:00,2013-01-14 17:00,,2013-04-09 08:00,2013-04-24 17:00,,PT_Normal,,,,,uaKrvycJJkuZIf8l1hGJtw,,,,N,0,0,,,2012-06-06 13:54,2012-06-06 13:54,admin,admin
67,138817,4412,21836,5284,1,0,N,N,N,CP_Drtn,TT_Task,DT_FixedDUR2,RV_OK,TK_NotStart,A1330,R.C columns Ground floor,,688,0,80,0,0,0,80,0,0,0,,,,2013-04-28 08:00,2013-05-08 17:00,,2013-01-17 08:00,2013-01-28 17:00,2013-01-17 08:00,2013-01-28 17:00,2013-01-17 08:00,2013-01-28 17:00,,2013-04-28 08:00,2013-05-08 17:00,,PT_Normal,,,,,v1nqvNq/eEOLlapsphrJIA,,,,N,0,0,,,2012-06-06 13:54,2012-06-06 13:54,admin,admin
68,138818,4412,21836,5284,1,0,N,N,N,CP_Drtn,TT_Task,DT_FixedDUR2,RV_OK,TK_NotStart,A2070,Bituminous insulation,,840,0,40,0,0,0,40,0,0,0,,,,2013-05-18 08:00,2013-05-22 17:00,,2013-01-15 08:00,2013-01-20 17:00,2013-01-15 08:00,2013-01-20 17:00,2013-01-15 08:00,2013-01-20 17:00,,2013-05-18 08:00,2013-05-22 17:00,,PT_Normal,,,,,m8H2xfszmEaiqP9jeq7+Dw,,,,N,0,0,,,2012-06-06 13:54,2012-06-06 13:54,admin,admin
69,138819,4412,21836,5284,1,0,N,N,N,CP_Drtn,TT_Task,DT_FixedDUR2,RV_OK,TK_NotStart,A2080,Masonry under slab on grade,,1792,1792,112,0,0,0,112,0,0,0,,,,2013-10-15 08:00,2013-10-30 17:00,,2013-01-27 08:00,2013-02-11 17:00,2013-01-27 08:00,2013-02-11 17:00,2013-01-27 08:00,2013-02-11 17:00,,2013-10-15 08:00,2013-10-30 17:00,,PT_Normal,,,,,frZjvEs2MkK2Yx0mRq4PIw,,,,N,0,0,,,2012-06-06 13:54,2012-06-06 13:54,admin,admin
70,138820,4412,21836,5284,1,0,N,N,N,CP_Drtn,TT_Task,DT_FixedDUR2,RV_OK,TK_NotStart,A2090,Backfilling around foundation,,840,0,40,0,0,0,40,0,0,0,,,,2013-05-23 08:00,2013-05-28 17:00,,2013-01-21 08:00,2013-01-26 17:00,2013-01-21 08:00,2013-01-26 17:00,2013-01-21 08:00,2013-01-26 17:00,,2013-05-23 08:00,2013-05-28 17:00,,PT_Normal,,,,,324J7YS7sEaO/907/5TSCQ,,,,N,0,0,,,2012-06-06 13:54,2012-06-06 13:54,admin,admin
71,138821,4412,21836,5284,1,0,N,N,N,CP_Drtn,TT_Task,DT_FixedDUR2,RV_OK,TK_NotStart,A2100,Slab on grade,,840,152,24,0,0,0,24,0,0,0,,,,2013-05-29 08:00,2013-06-01 17:00,,2013-01-27 08:00,2013-01-29 17:00,2013-01-27 08:00,2013-01-29 17:00,2013-01-27 08:00,2013-01-29 17:00,,2013-05-29 08:00,2013-06-01 17:00,,PT_Normal,,,,,65RWCivJpUOKs3AaYtXAmg,,,,N,0,0,,,2012-06-06 13:54,2012-06-06 13:54,admin,admin
72,138822,4412,21836,5284,1,0,N,N,N,CP_Drtn,TT_Task,DT_FixedDUR2,RV_OK,TK_NotStart,A2110,Ground floor R.C slab,,688,0,160,0,0,0,160,0,0,0,,,,2013-05-09 08:00,2013-06-01 17:00,,2013-01-29 08:00,2013-02-20 17:00,2013-01-29 08:00,2013-02-20 17:00,2013-01-29 08:00,2013-02-20 17:00,,2013-05-09 08:00,2013-06-01 17:00,,PT_Normal,,,,,FP+QJlbOq0CDnejxbAnmEg,,,,N,0,0,,,2012-06-06 13:54,2012-06-06 13:54,admin,admin
73,138823,4412,21837,5284,1,0,N,N,N,CP_Drtn,TT_Task,DT_FixedDUR2,RV_OK,TK_NotStart,A2120,Masonry works,,688,0,160,0,0,0,160,0,0,0,,,,2013-06-02 08:00,2013-06-24 17:00,,2013-02-21 08:00,2013-03-16 17:00,2013-02-21 08:00,2013-03-16 17:00,2013-02-21 08:00,2013-03-16 17:00,,2013-06-02 08:00,2013-06-24 17:00,,PT_Normal,,,,,qz4i+aZmxkq5YlO5FGAmOQ,,,,N,0,0,,,2012-06-06 13:54,2012-06-06 13:54,admin,admin
74,138824,4412,21837,5284,1,0,N,N,N,CP_Drtn,TT_Task,DT_FixedDUR2,RV_OK,TK_NotStart,A2130,Plaster works,,688,0,160,0,0,0,160,0,0,0,,,,2013-06-25 08:00,2013-07-17 17:00,,2013-03-17 08:00,2013-04-08 17:00,2013-03-17 08:00,2013-04-08 17:00,2013-03-17 08:00,2013-04-08 17:00,,2013-06-25 08:00,2013-07-17 17:00,,PT_Normal,,,,,fRuvS30UVUWvYl93ugYZdQ,,,,N,0,0,,,2012-06-06 13:54,2012-06-06 13:54,admin,admin
75,138825,4412,21837,5284,1,0,N,N,N,CP_Drtn,TT_Task,DT_FixedDUR2,RV_OK,TK_NotStart,A2140,Finishing works,,688,688,720,0,0,0,720,0,0,0,,,,2013-07-18 08:00,2013-10-30 17:00,,2013-04-09 08:00,2013-07-22 17:00,2013-04-09 08:00,2013-07-22 17:00,2013-04-09 08:00,2013-07-22 17:00,,2013-07-18 08:00,2013-10-30 17:00,,PT_Normal,,,,,exxNKSYmS0Wxlr4wnhykyQ,,,,N,0,0,,,2012-06-06 13:54,2012-06-06 13:54,admin,admin
76,138826,4412,21839,5284,1,0,N,N,N,CP_Drtn,TT_Task,DT_FixedDUR2,RV_OK,TK_NotStart,A1340,Excavation,,0,0,80,0,0,0,80,0,0,0,,,,2012-06-02 08:00,2012-06-12 17:00,,2012-06-02 08:00,2012-06-12 17:00,2012-06-02 08:00,2012-06-12 17:00,2012-06-02 08:00,2012-06-12 17:00,,2012-06-02 08:00,2012-06-12 17:00,,PT_Normal,,,,,XnQxtZGljE+HreHNhwUv2Q,,,,Y,0,0,,,2012-06-06 13:54,2012-06-06 13:54,admin,admin
77,138827,4412,21839,5284,1,0,N,N,N,CP_Drtn,TT_Task,DT_FixedDUR2,RV_OK,TK_NotStart,A1350,Soil Replacement,,1000,0,80,0,0,0,80,0,0,0,,,,2012-11-06 08:00,2012-11-17 17:00,,2012-06-13 08:00,2012-06-24 17:00,2012-06-13 08:00,2012-06-24 17:00,2012-06-13 08:00,2012-06-24 17:00,,2012-11-06 08:00,2012-11-17 17:00,,PT_Normal,,,,,HGd0L40YRkOQtiJR7O/TPQ,,,,N,0,0,,,2012-06-06 13:54,2012-06-06 13:54,admin,admin
78,138828,4412,21839,5284,1,0,N,N,N,CP_Drtn,TT_Task,DT_FixedDUR2,RV_OK,TK_NotStart,A1360,P.C footings,,1000,0,80,0,0,0,80,0,0,0,,,,2012-11-18 08:00,2012-11-28 17:00,,2012-06-25 08:00,2012-07-05 17:00,2012-06-25 08:00,2012-07-05 17:00,2012-06-25 08:00,2012-07-05 17:00,,2012-11-18 08:00,2012-11-28 17:00,,PT_Normal,,,,,9cAT9NIOVEmm5MvLVyFzJg,,,,N,0,0,,,2012-06-06 13:54,2012-06-06 13:54,admin,admin
79,138829,4412,21839,5284,1,0,N,N,N,CP_Drtn,TT_Task,DT_FixedDUR2,RV_OK,TK_NotStart,A1370,R.C footings,,1000,0,112,0,0,0,112,0,0,0,,,,2012-12-11 08:00,2012-12-26 17:00,,2012-07-18 08:00,2012-08-02 17:00,2012-07-18 08:00,2012-08-02 17:00,2012-07-18 08:00,2012-08-02 17:00,,2012-12-11 08:00,2012-12-26 17:00,,PT_Normal,,,,,D/nZKpHu+0OzAbi5+BIsUw,,,,N,0,0,,,2012-06-06 13:54,2012-06-06 13:54,admin,admin
80,138830,4412,21839,5284,1,0,N,N,N,CP_Drtn,TT_Task,DT_FixedDUR2,RV_OK,TK_NotStart,A1380,R.C columns Ground floor,,1000,0,112,0,0,0,112,0,0,0,,,,2012-12-27 08:00,2013-01-12 17:00,,2012-08-04 08:00,2012-08-19 17:00,2012-08-04 08:00,2012-08-19 17:00,2012-08-04 08:00,2012-08-19 17:00,,2012-12-27 08:00,2013-01-12 17:00,,PT_Normal,,,,,cAS1lnLdCE+SXQWiQ0GTnw,,,,N,0,0,,,2012-06-06 13:54,2012-06-06 13:54,admin,admin
81,138831,4412,21839,5284,1,0,N,N,N,CP_Drtn,TT_Task,DT_FixedDUR2,RV_OK,TK_NotStart,A1390,Bituminous insulation,,1000,0,80,0,0,0,80,0,0,0,,,,2012-11-29 08:00,2012-12-10 17:00,,2012-07-07 08:00,2012-07-17 17:00,2012-07-07 08:00,2012-07-17 17:00,2012-07-07 08:00,2012-07-17 17:00,,2012-11-29 08:00,2012-12-10 17:00,,PT_Normal,,,,,0Mdq70FUx0e39K36TfMxlA,,,,N,0,0,,,2012-06-06 13:54,2012-06-06 13:54,admin,admin
82,138832,4412,21839,5284,1,0,N,N,N,CP_Drtn,TT_Task,DT_FixedDUR2,RV_OK,TK_NotStart,A2160,Backfilling around foundation,,1208,0,56,0,0,0,56,0,0,0,,,,2013-03-24 08:00,2013-03-31 17:00,,2012-09-29 08:00,2012-10-06 17:00,2012-09-29 08:00,2012-10-06 17:00,2012-09-29 08:00,2012-10-06 17:00,,2013-03-24 08:00,2013-03-31 17:00,,PT_Normal,,,,,ICERODcz0ECHd/rZcMM/kQ,,,,N,0,0,,,2012-06-06 13:54,2012-06-06 13:54,admin,admin
83,138833,4412,21839,5284,1,0,N,N,N,CP_Drtn,TT_Task,DT_FixedDUR2,RV_OK,TK_NotStart,A2170,Slab on grade,,1208,208,56,0,0,0,56,0,0,0,,,,2013-04-01 08:00,2013-04-08 17:00,,2012-10-07 08:00,2012-10-14 17:00,2012-10-07 08:00,2012-10-14 17:00,2012-10-07 08:00,2012-10-14 17:00,,2013-04-01 08:00,2013-04-08 17:00,,PT_Normal,,,,,3Dya/qvXA0arxA0ZUKKl6w,,,,N,0,0,,,2012-06-06 13:54,2012-06-06 13:54,admin,admin
84,138834,4412,21839,5284,1,0,N,N,N,CP_Drtn,TT_Task,DT_FixedDUR2,RV_OK,TK_NotStart,A2180,Ground floor R.C slab,,1000,0,160,0,0,0,160,0,0,0,,,,2013-01-13 08:00,2013-02-04 17:00,,2012-08-20 08:00,2012-09-11 17:00,2012-08-20 08:00,2012-09-11 17:00,2012-08-20 08:00,2012-09-11 17:00,,2013-01-13 08:00,2013-02-04 17:00,,PT_Normal,,,,,6suBOzdL8kSE9XhI2aKbTw,,,,N,0,0,,,2012-06-06 13:54,2012-06-06 13:54,admin,admin
85,138835,4412,21839,5284,1,0,N,N,N,CP_Drtn,TT_Task,DT_FixedDUR2,RV_OK,TK_NotStart,A2190,First floor columns,,1000,0,112,0,0,0,112,0,0,0,,,,2013-02-05 08:00,2013-02-20 17:00,,2012-09-12 08:00,2012-09-27 17:00,2012-09-12 08:00,2012-09-27 17:00,2012-09-12 08:00,2012-09-27 17:00,,2013-02-05 08:00,2013-02-20 17:00,,PT_Normal,,,,,edFdlewWtE6VwIqz/fS82Q,,,,N,0,0,,,2012-06-06 13:54,2012-06-06 13:54,admin,admin
86,138836,4412,21839,5284,1,0,N,N,N,CP_Drtn,TT_Task,DT_FixedDUR2,RV_OK,TK_NotStart,A2200,First floor slab,,1000,0,160,0,0,0,160,0,0,0,,,,2013-02-21 08:00,2013-03-16 17:00,,2012-09-29 08:00,2012-10-21 17:00,2012-09-29 08:00,2012-10-21 17:00,2012-09-29 08:00,2012-10-21 17:00,,2013-02-21 08:00,2013-03-16 17:00,,PT_Normal,,,,,782LvsUnJUyrQsfKHobKZg,,,,N,0,0,,,2012-06-06 13:54,2012-06-06 13:54,admin,admin
87,138837,4412,21839,5284,1,0,N,N,N,CP_Drtn,TT_Task,DT_FixedDUR2,RV_OK,TK_NotStart,A2210,Steel structure erection,,1000,0,160,0,0,0,160,0,0,0,,,,2013-03-17 08:00,2013-04-08 17:00,,2012-10-22 08:00,2012-11-13 17:00,2012-10-22 08:00,2012-11-13 17:00,2012-10-22 08:00,2012-11-13 17:00,,2013-03-17 08:00,2013-04-08 17:00,,PT_Normal,,,,,Gmpu7AAQ3EOz7dr1YcJs4A,,,,N,0,0,,,2012-06-06 13:54,2012-06-06 13:54,admin,admin
88,138838,4412,21839,5284,1,0,N,N,N,CP_Drtn,TT_Task,DT_FixedDUR2,RV_OK,TK_NotStart,A2220,Corrugated sheets installation,,2248,1248,160,0,0,0,160,0,0,0,,,,2013-10-08 08:00,2013-10-30 17:00,,2012-11-14 08:00,2012-12-06 17:00,2012-11-14 08:00,2012-12-06 17:00,2012-11-14 08:00,2012-12-06 17:00,,2013-10-08 08:00,2013-10-30 17:00,,PT_Normal,,,,,HCBjOEkY3kOBpkOJfI0nOA,,,,N,0,0,,,2012-06-06 13:54,2012-06-06 13:54,admin,admin
89,138839,4412,21835,5284,1,0,N,N,N,CP_Drtn,TT_Task,DT_FixedDUR2,RV_OK,TK_NotStart,A2230,Masonry works,,1000,0,480,0,0,0,480,0,0,0,,,,2013-04-09 08:00,2013-06-17 17:00,,2012-11-14 08:00,2013-01-22 17:00,2012-11-14 08:00,2013-01-22 17:00,2012-11-14 08:00,2013-01-22 17:00,,2013-04-09 08:00,2013-06-17 17:00,,PT_Normal,,,,,goZE7L9JR0C+BuoeZ9q2pQ,,,,N,0,0,,,2012-06-06 13:54,2012-06-06 13:54,admin,admin
90,138840,4412,21838,5284,1,0,N,N,N,CP_Drtn,TT_Task,DT_FixedDUR2,RV_OK,TK_NotStart,A2530,Polyethyllen Insulation under S.O.G,,416,0,64,0,0,0,64,0,0,0,,,,2013-05-26 08:00,2013-06-03 17:00,,2013-03-26 08:00,2013-04-03 17:00,2013-03-26 08:00,2013-04-03 17:00,2013-03-26 08:00,2013-04-03 17:00,,2013-05-26 08:00,2013-06-03 17:00,,PT_Normal,,,,,ZvU8+ErL3Uquj4KlnHGnCw,,,,N,0,0,,,2012-06-06 13:54,2012-06-06 13:54,admin,admin
91,138841,4412,21838,5284,1,0,N,N,N,CP_Drtn,TT_Task,DT_FixedDUR2,RV_OK,TK_NotStart,A2540,R.C Slab on grade,,416,0,200,0,0,0,200,0,0,0,,,,2013-05-27 08:00,2013-06-24 17:00,,2013-03-27 08:00,2013-04-24 17:00,2013-03-27 08:00,2013-04-24 17:00,2013-03-27 08:00,2013-04-24 17:00,,2013-05-27 08:00,2013-06-24 17:00,,PT_Normal,,,,,VwMf9ktMMU66UcKdM4/PKA,,,,N,0,0,,,2012-06-06 13:54,2012-06-06 13:54,admin,admin
92,138842,4412,21838,5284,1,0,N,N,N,CP_Drtn,TT_Task,DT_FixedDUR2,RV_OK,TK_NotStart,A2550,R.C for Pedestals,,496,80,144,0,0,0,144,0,0,0,,,,2013-04-18 08:00,2013-05-08 17:00,,2013-02-05 08:00,2013-02-25 17:00,2013-02-05 08:00,2013-02-25 17:00,2013-02-05 08:00,2013-02-25 17:00,,2013-04-18 08:00,2013-05-08 17:00,,PT_Normal,,,,,24L5tB2WYUOs2NScLzQ6zw,,,,N,0,0,,,2012-06-06 13:54,2012-06-06 13:54,admin,admin
93,138843,4412,21838,5284,1,0,N,N,N,CP_Drtn,TT_Task,DT_FixedDUR2,RV_OK,TK_NotStart,A2560,R.C for tie beams,,416,0,160,0,0,0,160,0,0,0,,,,2013-04-21 08:00,2013-05-13 17:00,,2013-02-19 08:00,2013-03-13 17:00,2013-02-19 08:00,2013-03-13 17:00,2013-02-19 08:00,2013-03-13 17:00,,2013-04-21 08:00,2013-05-13 17:00,,PT_Normal,,,,,UPZpqxEl+kG0K2jZ1Ynf1w,,,,N,0,0,,,2012-06-06 13:54,2012-06-06 13:54,admin,admin
94,138844,4412,21838,5284,1,0,N,N,N,CP_Drtn,TT_Task,DT_FixedDUR2,RV_OK,TK_NotStart,A2570,Steel Structure Erection,,416,0,280,0,0,0,280,0,0,0,,,,2013-06-25 08:00,2013-08-04 17:00,,2013-04-25 08:00,2013-06-04 17:00,2013-04-25 08:00,2013-06-04 17:00,2013-04-25 08:00,2013-06-04 17:00,,2013-06-25 08:00,2013-08-04 17:00,,PT_Normal,,,,,B6j19u1k80yjJmCn7UtxbQ,,,,N,0,0,,,2012-06-06 13:54,2012-06-06 13:54,admin,admin
95,138845,4412,21838,5284,1,0,N,N,N,CP_Drtn,TT_Task,DT_FixedDUR2,RV_OK,TK_NotStart,A2580,Bituminous emulsion Insulation,,416,0,80,0,0,0,80,0,0,0,,,,2013-05-14 08:00,2013-05-25 17:00,,2013-03-14 08:00,2013-03-25 17:00,2013-03-14 08:00,2013-03-25 17:00,2013-03-14 08:00,2013-03-25 17:00,,2013-05-14 08:00,2013-05-25 17:00,,PT_Normal,,,,,ldfEp59BJEaOkLVrbvqSAg,,,,N,0,0,,,2012-06-06 13:54,2012-06-06 13:54,admin,admin
96,138846,4412,21838,5284,1,0,N,N,N,CP_Drtn,TT_Task,DT_FixedDUR2,RV_OK,TK_NotStart,A2590,R.C for deck slab,,912,24,96,0,0,0,96,0,0,0,,,,2013-09-29 08:00,2013-10-12 17:00,,2013-05-19 08:00,2013-06-01 17:00,2013-05-19 08:00,2013-06-01 17:00,2013-05-19 08:00,2013-06-01 17:00,,2013-09-29 08:00,2013-10-12 17:00,,PT_Normal,,,,,KVkgzITKw0m4+gfM35x94w,,,,N,0,0,,,2012-06-06 13:54,2012-06-06 13:54,admin,admin
97,138847,4412,21846,5284,1,0,N,N,N,CP_Drtn,TT_Task,DT_FixedDUR2,RV_OK,TK_NotStart,A2600,Cladding for walls & Roof,,888,888,128,0,0,0,128,0,0,0,,,,2013-10-13 08:00,2013-10-30 17:00,,2013-06-05 08:00,2013-06-23 17:00,2013-06-05 08:00,2013-06-23 17:00,2013-06-05 08:00,2013-06-23 17:00,,2013-10-13 08:00,2013-10-30 17:00,,PT_Normal,,,,,6/+hEUMJiEa6WXeU4OPA3g,,,,N,0,0,,,2012-06-06 13:54,2012-06-06 13:54,admin,admin
98,138848,4412,21846,5284,1,0,N,N,N,CP_Drtn,TT_Task,DT_FixedDUR2,RV_OK,TK_NotStart,A2610,Masonry works,,416,0,200,0,0,0,200,0,0,0,,,,2013-08-05 08:00,2013-09-02 17:00,,2013-06-05 08:00,2013-07-03 17:00,2013-06-05 08:00,2013-07-03 17:00,2013-06-05 08:00,2013-07-03 17:00,,2013-08-05 08:00,2013-09-02 17:00,,PT_Normal,,,,,+DQBNCyJ302IyUsuydnBYw,,,,N,0,0,,,2012-06-06 13:54,2012-06-06 13:54,admin,admin
99,138849,4412,21846,5284,1,0,N,N,N,CP_Drtn,TT_Task,DT_FixedDUR2,RV_OK,TK_NotStart,A2620,Finishes,,416,416,480,0,0,0,480,0,0,0,,,,2013-08-22 08:00,2013-10-30 17:00,,2013-06-23 08:00,2013-08-31 17:00,2013-06-23 08:00,2013-08-31 17:00,2013-06-23 08:00,2013-08-31 17:00,,2013-08-22 08:00,2013-10-30 17:00,,PT_Normal,,,,,u+C6Kpu670SrP9w9Ur1Qlg,,,,N,0,0,,,2012-06-06 13:54,2012-06-06 13:54,admin,admin
100,138850,4412,21838,5284,1,0,N,N,N,CP_Drtn,TT_Task,DT_FixedDUR2,RV_OK,TK_NotStart,A1400,Excavation,,416,0,80,0,0,0,80,0,0,0,,,,2013-02-10 08:00,2013-02-20 17:00,,2012-12-11 08:00,2012-12-22 17:00,2012-12-11 08:00,2012-12-22 17:00,2012-12-11 08:00,2012-12-22 17:00,,2013-02-10 08:00,2013-02-20 17:00,,PT_Normal,,,,,PRbBdfRSfUGRfGSNz/YMLw,,,,N,0,0,,,2012-06-06 13:54,2012-06-06 13:54,admin,admin
101,138851,4412,21838,5284,1,0,N,N,N,CP_Drtn,TT_Task,DT_FixedDUR2,RV_OK,TK_NotStart,A1410,Backfilling around foundation,,416,0,96,0,0,0,96,0,0,0,,,,2013-04-07 08:00,2013-04-20 17:00,,2013-02-05 08:00,2013-02-18 17:00,2013-02-05 08:00,2013-02-18 17:00,2013-02-05 08:00,2013-02-18 17:00,,2013-04-07 08:00,2013-04-20 17:00,,PT_Normal,,,,,QWLZY7Mg802WOiGZbbaVpA,,,,N,0,0,,,2012-06-06 13:54,2012-06-06 13:54,admin,admin
102,138852,4412,21838,5284,1,0,N,N,N,CP_Drtn,TT_Task,DT_FixedDUR2,RV_OK,TK_NotStart,A1420,Soil Replacement,,416,0,96,0,0,0,96,0,0,0,,,,2013-02-21 08:00,2013-03-06 17:00,,2012-12-23 08:00,2013-01-05 17:00,2012-12-23 08:00,2013-01-05 17:00,2012-12-23 08:00,2013-01-05 17:00,,2013-02-21 08:00,2013-03-06 17:00,,PT_Normal,,,,,Pooy1weTK0q02yyFfcREBQ,,,,N,0,0,,,2012-06-06 13:54,2012-06-06 13:54,admin,admin
103,138853,4412,21838,5284,1,0,N,N,N,CP_Drtn,TT_Task,DT_FixedDUR2,RV_OK,TK_NotStart,A1430,P.C footings,,416,0,80,0,0,0,80,0,0,0,,,,2013-03-07 08:00,2013-03-18 17:00,,2013-01-06 08:00,2013-01-16 17:00,2013-01-06 08:00,2013-01-16 17:00,2013-01-06 08:00,2013-01-16 17:00,,2013-03-07 08:00,2013-03-18 17:00,,PT_Normal,,,,,kCbQqZab6EG/l6mvabkzZQ,,,,N,0,0,,,2012-06-06 13:54,2012-06-06 13:54,admin,admin
104,138854,4412,21838,5284,1,0,N,N,N,CP_Drtn,TT_Task,DT_FixedDUR2,RV_OK,TK_NotStart,A1440,R.C footings,,416,0,128,0,0,0,128,0,0,0,,,,2013-03-19 08:00,2013-04-06 17:00,,2013-01-17 08:00,2013-02-04 17:00,2013-01-17 08:00,2013-02-04 17:00,2013-01-17 08:00,2013-02-04 17:00,,2013-03-19 08:00,2013-04-06 17:00,,PT_Normal,,,,,ixkGqwVV8kCsq9cKNv9DQw,,,,N,0,0,,,2012-06-06 13:54,2012-06-06 13:54,admin,admin
105,138855,4412,21845,5284,1,0,N,N,N,CP_Drtn,TT_Task,DT_FixedDUR2,RV_OK,TK_NotStart,A1460,Soil replacement,,520,0,56,0,0,0,56,0,0,0,,,,2013-04-03 08:00,2013-04-10 17:00,,2013-01-17 08:00,2013-01-24 17:00,2013-01-17 08:00,2013-01-24 17:00,2013-01-17 08:00,2013-01-24 17:00,,2013-04-03 08:00,2013-04-10 17:00,,PT_Normal,,,,,6kzFP72jXkSNPqOHo5dfvg,,,,N,0,0,,,2012-06-06 13:54,2012-06-06 13:54,admin,admin
106,138856,4412,21845,5284,1,0,N,N,N,CP_Drtn,TT_Task,DT_FixedDUR2,RV_OK,TK_NotStart,A1470,P.Cfootings,,520,0,56,0,0,0,56,0,0,0,,,,2013-04-11 08:00,2013-04-18 17:00,,2013-01-26 08:00,2013-02-02 17:00,2013-01-26 08:00,2013-02-02 17:00,2013-01-26 08:00,2013-02-02 17:00,,2013-04-11 08:00,2013-04-18 17:00,,PT_Normal,,,,,qPvrBLicWUiySZeX2WfixA,,,,N,0,0,,,2012-06-06 13:54,2012-06-06 13:54,admin,admin
107,138857,4412,21845,5284,1,0,N,N,N,CP_Drtn,TT_Task,DT_FixedDUR2,RV_OK,TK_NotStart,A1480,R.C footings,,520,0,112,0,0,0,112,0,0,0,,,,2013-04-20 08:00,2013-05-05 17:00,,2013-02-03 08:00,2013-02-18 17:00,2013-02-03 08:00,2013-02-18 17:00,2013-02-03 08:00,2013-02-18 17:00,,2013-04-20 08:00,2013-05-05 17:00,,PT_Normal,,,,,AC8IHVDHNUeZLBZUdUGKWg,,,,N,0,0,,,2012-06-06 13:54,2012-06-06 13:54,admin,admin
108,138858,4412,21845,5284,1,0,N,N,N,CP_Drtn,TT_Task,DT_FixedDUR2,RV_OK,TK_NotStart,A1490,R.C columns,,520,0,80,0,0,0,80,0,0,0,,,,2013-05-06 08:00,2013-05-16 17:00,,2013-02-19 08:00,2013-03-02 17:00,2013-02-19 08:00,2013-03-02 17:00,2013-02-19 08:00,2013-03-02 17:00,,2013-05-06 08:00,2013-05-16 17:00,,PT_Normal,,,,,61YzvNpnp0OQpoYlw/MrvA,,,,N,0,0,,,2012-06-06 13:54,2012-06-06 13:54,admin,admin
109,138859,4412,21845,5284,1,0,N,N,N,CP_Drtn,TT_Task,DT_FixedDUR2,RV_OK,TK_NotStart,A1500,Bituminous insulation,,520,0,40,0,0,0,40,0,0,0,,,,2013-05-18 08:00,2013-05-22 17:00,,2013-03-03 08:00,2013-03-07 17:00,2013-03-03 08:00,2013-03-07 17:00,2013-03-03 08:00,2013-03-07 17:00,,2013-05-18 08:00,2013-05-22 17:00,,PT_Normal,,,,,f16DiZ6tC0qXtqT5JMlFkA,,,,N,0,0,,,2012-06-06 13:54,2012-06-06 13:54,admin,admin
110,138860,4412,21845,5284,1,0,N,N,N,CP_Drtn,TT_Task,DT_FixedDUR2,RV_OK,TK_NotStart,A1450,Excavation,,440,0,56,0,0,0,56,0,0,0,,,,2013-03-14 08:00,2013-03-21 17:00,,2013-01-09 08:00,2013-01-16 17:00,2013-01-09 08:00,2013-01-16 17:00,2013-01-09 08:00,2013-01-16 17:00,,2013-03-14 08:00,2013-03-21 17:00,,PT_Normal,,,,,CVuYHtNnaEauT7rPY52vIA,,,,N,0,0,,,2012-06-06 13:54,2012-06-06 13:54,admin,admin
111,138861,4412,21845,5284,1,0,N,N,N,CP_Drtn,TT_Task,DT_FixedDUR2,RV_OK,TK_NotStart,A2250,Masonry under slab on grade,,520,0,80,0,0,0,80,0,0,0,,,,2013-05-23 08:00,2013-06-03 17:00,,2013-03-09 08:00,2013-03-19 17:00,2013-03-09 08:00,2013-03-19 17:00,2013-03-09 08:00,2013-03-19 17:00,,2013-05-23 08:00,2013-06-03 17:00,,PT_Normal,,,,,WPg1r5qpvUWhV0HikxI36Q,,,,N,0,0,,,2012-06-06 13:54,2012-06-06 13:54,admin,admin
112,138862,4412,21845,5284,1,0,N,N,N,CP_Drtn,TT_Task,DT_FixedDUR2,RV_OK,TK_NotStart,A2260,Backfilling around foundation,,520,0,40,0,0,0,40,0,0,0,,,,2013-06-04 08:00,2013-06-09 17:00,,2013-03-20 08:00,2013-03-25 17:00,2013-03-20 08:00,2013-03-25 17:00,2013-03-20 08:00,2013-03-25 17:00,,2013-06-04 08:00,2013-06-09 17:00,,PT_Normal,,,,,kV5ARJS/tkSQT4E3H1CICw,,,,N,0,0,,,2012-06-06 13:54,2012-06-06 13:54,admin,admin
113,138863,4412,21845,5284,1,0,N,N,N,CP_Drtn,TT_Task,DT_FixedDUR2,RV_OK,TK_NotStart,A2270,Slab on grade,,520,0,24,0,0,0,24,0,0,0,,,,2013-06-10 08:00,2013-06-12 17:00,,2013-03-26 08:00,2013-03-28 17:00,2013-03-26 08:00,2013-03-28 17:00,2013-03-26 08:00,2013-03-28 17:00,,2013-06-10 08:00,2013-06-12 17:00,,PT_Normal,,,,,W/4mLqIwB02eV35Ch8IFdQ,,,,N,0,0,,,2012-06-06 13:54,2012-06-06 13:54,admin,admin
114,138864,4412,21845,5284,1,0,N,N,N,CP_Drtn,TT_Task,DT_FixedDUR2,RV_OK,TK_NotStart,A2280,Ground floor R.C slab,,520,0,160,0,0,0,160,0,0,0,,,,2013-06-13 08:00,2013-07-06 17:00,,2013-03-30 08:00,2013-04-21 17:00,2013-03-30 08:00,2013-04-21 17:00,2013-03-30 08:00,2013-04-21 17:00,,2013-06-13 08:00,2013-07-06 17:00,,PT_Normal,,,,,M4Pdu+VH9E+LDLlOvtslMQ,,,,N,0,0,,,2012-06-06 13:54,2012-06-06 13:54,admin,admin
115,138865,4412,21841,5284,1,0,N,N,N,CP_Drtn,TT_Task,DT_FixedDUR2,RV_OK,TK_NotStart,A2290,Masonry works,,520,0,160,0,0,0,160,0,0,0,,,,2013-07-07 08:00,2013-07-29 17:00,,2013-04-22 08:00,2013-05-14 17:00,2013-04-22 08:00,2013-05-14 17:00,2013-04-22 08:00,2013-05-14 17:00,,2013-07-07 08:00,2013-07-29 17:00,,PT_Normal,,,,,+7rk84hn+kGhW4e0HbWePA,,,,N,0,0,,,2012-06-06 13:54,2012-06-06 13:54,admin,admin
116,138866,4412,21841,5284,1,0,N,N,N,CP_Drtn,TT_Task,DT_FixedDUR2,RV_OK,TK_NotStart,A2300,Plaster works,,520,0,160,0,0,0,160,0,0,0,,,,2013-07-30 08:00,2013-08-21 17:00,,2013-05-15 08:00,2013-06-06 17:00,2013-05-15 08:00,2013-06-06 17:00,2013-05-15 08:00,2013-06-06 17:00,,2013-07-30 08:00,2013-08-21 17:00,,PT_Normal,,,,,jTeCilyH0EOwVDwOmvEotQ,,,,N,0,0,,,2012-06-06 13:54,2012-06-06 13:54,admin,admin
117,138867,4412,21841,5284,1,0,N,N,N,CP_Drtn,TT_Task,DT_FixedDUR2,RV_OK,TK_NotStart,A2310,Finishing works,,520,520,480,0,0,0,480,0,0,0,,,,2013-08-22 08:00,2013-10-30 17:00,,2013-06-08 08:00,2013-08-15 17:00,2013-06-08 08:00,2013-08-15 17:00,2013-06-08 08:00,2013-08-15 17:00,,2013-08-22 08:00,2013-10-30 17:00,,PT_Normal,,,,,agxSxrWedEWJfEixrY7ibw,,,,N,0,0,,,2012-06-06 13:54,2012-06-06 13:54,admin,admin
118,138868,4412,21830,5284,1,0,N,N,N,CP_Drtn,TT_Task,DT_FixedDUR2,RV_OK,TK_NotStart,A1510,Excavation,,696,0,80,0,0,0,80,0,0,0,,,,2013-04-21 08:00,2013-05-01 17:00,,2013-01-09 08:00,2013-01-20 17:00,2013-01-09 08:00,2013-01-20 17:00,2013-01-09 08:00,2013-01-20 17:00,,2013-04-21 08:00,2013-05-01 17:00,,PT_Normal,,,,,0um7Upyk90KtrqIOO9sB8Q,,,,N,0,0,,,2012-06-06 13:54,2012-06-06 13:54,admin,admin
119,138869,4412,21830,5284,1,0,N,N,N,CP_Drtn,TT_Task,DT_FixedDUR2,RV_OK,TK_NotStart,A1520,Soil replacement,,696,0,96,0,0,0,96,0,0,0,,,,2013-05-02 08:00,2013-05-15 17:00,,2013-01-21 08:00,2013-02-03 17:00,2013-01-21 08:00,2013-02-03 17:00,2013-01-21 08:00,2013-02-03 17:00,,2013-05-02 08:00,2013-05-15 17:00,,PT_Normal,,,,,J5TvLTIuB0KQ3GoNmwqcIw,,,,N,0,0,,,2012-06-06 13:54,2012-06-06 13:54,admin,admin
120,138870,4412,21830,5284,1,0,N,N,N,CP_Drtn,TT_Task,DT_FixedDUR2,RV_OK,TK_NotStart,A1530,P.C footings,,696,0,96,0,0,0,96,0,0,0,,,,2013-05-16 08:00,2013-05-29 17:00,,2013-02-04 08:00,2013-02-17 17:00,2013-02-04 08:00,2013-02-17 17:00,2013-02-04 08:00,2013-02-17 17:00,,2013-05-16 08:00,2013-05-29 17:00,,PT_Normal,,,,,KloI+defq0yG7ldAXsxuwQ,,,,N,0,0,,,2012-06-06 13:54,2012-06-06 13:54,admin,admin
121,138871,4412,21830,5284,1,0,N,N,N,CP_Drtn,TT_Task,DT_FixedDUR2,RV_OK,TK_NotStart,A1540,R.C footings,,696,0,200,0,0,0,200,0,0,0,,,,2013-05-30 08:00,2013-06-27 17:00,,2013-02-18 08:00,2013-03-18 17:00,2013-02-18 08:00,2013-03-18 17:00,2013-02-18 08:00,2013-03-18 17:00,,2013-05-30 08:00,2013-06-27 17:00,,PT_Normal,,,,,o+vU3f5C00SML19GNAMBtg,,,,N,0,0,,,2012-06-06 13:54,2012-06-06 13:54,admin,admin
122,138872,4412,21830,5284,1,0,N,N,N,CP_Drtn,TT_Task,DT_FixedDUR2,RV_OK,TK_NotStart,A1550,R.C walls,,696,0,320,0,0,0,320,0,0,0,,,,2013-06-29 08:00,2013-08-13 17:00,,2013-03-19 08:00,2013-05-04 17:00,2013-03-19 08:00,2013-05-04 17:00,2013-03-19 08:00,2013-05-04 17:00,,2013-06-29 08:00,2013-08-13 17:00,,PT_Normal,,,,,OX5cSi9lOEyPh+WEJGKDWg,,,,N,0,0,,,2012-06-06 13:54,2012-06-06 13:54,admin,admin
123,138873,4412,21830,5284,1,0,N,N,N,CP_Drtn,TT_Task,DT_FixedDUR2,RV_OK,TK_NotStart,A1560,R.C slab,,696,0,160,0,0,0,160,0,0,0,,,,2013-08-14 08:00,2013-09-05 17:00,,2013-05-05 08:00,2013-05-27 17:00,2013-05-05 08:00,2013-05-27 17:00,2013-05-05 08:00,2013-05-27 17:00,,2013-08-14 08:00,2013-09-05 17:00,,PT_Normal,,,,,MmUCkpIPNE+pG3mm9ajdCw,,,,N,0,0,,,2012-06-06 13:54,2012-06-06 13:54,admin,admin
124,138874,4412,21830,5284,1,0,N,N,N,CP_Drtn,TT_Task,DT_FixedDUR2,RV_OK,TK_NotStart,A2450,Insulation work,,696,0,176,0,0,0,176,0,0,0,,,,2013-09-07 08:00,2013-10-01 17:00,,2013-05-28 08:00,2013-06-22 17:00,2013-05-28 08:00,2013-06-22 17:00,2013-05-28 08:00,2013-06-22 17:00,,2013-09-07 08:00,2013-10-01 17:00,,PT_Normal,,,,,cg3qDCFpO0icS7yUx8c4uw,,,,N,0,0,,,2012-06-06 13:54,2012-06-06 13:54,admin,admin
125,138875,4412,21830,5284,1,0,N,N,N,CP_Drtn,TT_Task,DT_FixedDUR2,RV_OK,TK_NotStart,A2460,Masonry works,,696,696,200,0,0,0,200,0,0,0,,,,2013-10-02 08:00,2013-10-30 17:00,,2013-06-23 08:00,2013-07-21 17:00,2013-06-23 08:00,2013-07-21 17:00,2013-06-23 08:00,2013-07-21 17:00,,2013-10-02 08:00,2013-10-30 17:00,,PT_Normal,,,,,bJLCQw68VUyse4BEj0AslQ,,,,N,0,0,,,2012-06-06 13:54,2012-06-06 13:54,admin,admin
126,138876,4412,21827,5284,1,0,N,N,N,CP_Drtn,TT_Task,DT_FixedDUR2,RV_OK,TK_NotStart,A1570,Excavation,,440,0,96,0,0,0,96,0,0,0,,,,2013-03-14 08:00,2013-03-27 17:00,,2013-01-09 08:00,2013-01-22 17:00,2013-01-09 08:00,2013-01-22 17:00,2013-01-09 08:00,2013-01-22 17:00,,2013-03-14 08:00,2013-03-27 17:00,,PT_Normal,,,,,wSz8JREdAUqpNsatlKd4HQ,,,,N,0,0,,,2012-06-06 13:54,2012-06-06 13:54,admin,admin
127,138877,4412,21827,5284,1,0,N,N,N,CP_Drtn,TT_Task,DT_FixedDUR2,RV_OK,TK_NotStart,A1580,Soil replacement,,440,0,96,0,0,0,96,0,0,0,,,,2013-03-28 08:00,2013-04-10 17:00,,2013-01-23 08:00,2013-02-05 17:00,2013-01-23 08:00,2013-02-05 17:00,2013-01-23 08:00,2013-02-05 17:00,,2013-03-28 08:00,2013-04-10 17:00,,PT_Normal,,,,,2aid6kaB+0quLeog6Lls7g,,,,N,0,0,,,2012-06-06 13:54,2012-06-06 13:54,admin,admin
128,138878,4412,21827,5284,1,0,N,N,N,CP_Drtn,TT_Task,DT_FixedDUR2,RV_OK,TK_NotStart,A1590,P.C footings,,440,0,240,0,0,0,240,0,0,0,,,,2013-04-11 08:00,2013-05-15 17:00,,2013-02-06 08:00,2013-03-12 17:00,2013-02-06 08:00,2013-03-12 17:00,2013-02-06 08:00,2013-03-12 17:00,,2013-04-11 08:00,2013-05-15 17:00,,PT_Normal,,,,,6vPNTZXG00GUAgf1e544aA,,,,N,0,0,,,2012-06-06 13:54,2012-06-06 13:54,admin,admin
129,138879,4412,21827,5284,1,0,N,N,N,CP_Drtn,TT_Task,DT_FixedDUR2,RV_OK,TK_NotStart,A1600,R.C footings,,440,0,240,0,0,0,240,0,0,0,,,,2013-04-23 08:00,2013-05-27 17:00,,2013-02-18 08:00,2013-03-24 17:00,2013-02-18 08:00,2013-03-24 17:00,2013-02-18 08:00,2013-03-24 17:00,,2013-04-23 08:00,2013-05-27 17:00,,PT_Normal,,,,,H94yE5c13kGyICPOLS+n+Q,,,,N,0,0,,,2012-06-06 13:54,2012-06-06 13:54,admin,admin
130,138880,4412,21827,5284,1,0,N,N,N,CP_Drtn,TT_Task,DT_FixedDUR2,RV_OK,TK_NotStart,A1610,R.C columns,,440,0,240,0,0,0,240,0,0,0,,,,2013-05-05 08:00,2013-06-08 17:00,,2013-03-02 08:00,2013-04-04 17:00,2013-03-02 08:00,2013-04-04 17:00,2013-03-02 08:00,2013-04-04 17:00,,2013-05-05 08:00,2013-06-08 17:00,,PT_Normal,,,,,vBfYr5aeakW6J7aLO+Ixlw,,,,N,0,0,,,2012-06-06 13:54,2012-06-06 13:54,admin,admin
131,138881,4412,21827,5284,1,0,N,N,N,CP_Drtn,TT_Task,DT_FixedDUR2,RV_OK,TK_NotStart,A1620,Bituminous insulation,,440,0,120,0,0,0,120,0,0,0,,,,2013-06-09 08:00,2013-06-25 17:00,,2013-04-06 08:00,2013-04-22 17:00,2013-04-06 08:00,2013-04-22 17:00,2013-04-06 08:00,2013-04-22 17:00,,2013-06-09 08:00,2013-06-25 17:00,,PT_Normal,,,,,zQpd7Mqv/k+HJSvpHiL87A,,,,N,0,0,,,2012-06-06 13:54,2012-06-06 13:54,admin,admin
132,138882,4412,21827,5284,1,0,N,N,N,CP_Drtn,TT_Task,DT_FixedDUR2,RV_OK,TK_NotStart,A2470,Backfilling around foundation,,440,0,160,0,0,0,160,0,0,0,,,,2013-06-26 08:00,2013-07-18 17:00,,2013-04-23 08:00,2013-05-15 17:00,2013-04-23 08:00,2013-05-15 17:00,2013-04-23 08:00,2013-05-15 17:00,,2013-06-26 08:00,2013-07-18 17:00,,PT_Normal,,,,,xODYguRhwEC9zsaChN/PlQ,,,,N,0,0,,,2012-06-06 13:54,2012-06-06 13:54,admin,admin
133,138883,4412,21827,5284,1,0,N,N,N,CP_Drtn,TT_Task,DT_FixedDUR2,RV_OK,TK_NotStart,A2480,Masonry works,,440,0,112,0,0,0,112,0,0,0,,,,2013-07-20 08:00,2013-08-04 17:00,,2013-05-16 08:00,2013-06-01 17:00,2013-05-16 08:00,2013-06-01 17:00,2013-05-16 08:00,2013-06-01 17:00,,2013-07-20 08:00,2013-08-04 17:00,,PT_Normal,,,,,/hypUxXOx0GaNGCf2hXMmA,,,,N,0,0,,,2012-06-06 13:54,2012-06-06 13:54,admin,admin
134,138884,4412,21827,5284,1,0,N,N,N,CP_Drtn,TT_Task,DT_FixedDUR2,RV_OK,TK_NotStart,A2490,Stainless steel pipes,,440,0,240,0,0,0,240,0,0,0,,,,2013-08-05 08:00,2013-09-08 17:00,,2013-06-02 08:00,2013-07-06 17:00,2013-06-02 08:00,2013-07-06 17:00,2013-06-02 08:00,2013-07-06 17:00,,2013-08-05 08:00,2013-09-08 17:00,,PT_Normal,,,,,qqheEhIL7EW0XrbNATPPdw,,,,N,0,0,,,2012-06-06 13:54,2012-06-06 13:54,admin,admin
135,138885,4412,21827,5284,1,0,N,N,N,CP_Drtn,TT_Task,DT_FixedDUR2,RV_OK,TK_NotStart,A2500,Plaster works,,440,0,160,0,0,0,160,0,0,0,,,,2013-09-09 08:00,2013-10-01 17:00,,2013-07-07 08:00,2013-07-29 17:00,2013-07-07 08:00,2013-07-29 17:00,2013-07-07 08:00,2013-07-29 17:00,,2013-09-09 08:00,2013-10-01 17:00,,PT_Normal,,,,,ONJqOj6z8Emq0QWCUJ1+6A,,,,N,0,0,,,2012-06-06 13:54,2012-06-06 13:54,admin,admin
136,138886,4412,21827,5284,1,0,N,N,N,CP_Drtn,TT_Task,DT_FixedDUR2,RV_OK,TK_NotStart,A2510,Gates erection,,440,440,200,0,0,0,200,0,0,0,,,,2013-10-02 08:00,2013-10-30 17:00,,2013-07-30 08:00,2013-08-27 17:00,2013-07-30 08:00,2013-08-27 17:00,2013-07-30 08:00,2013-08-27 17:00,,2013-10-02 08:00,2013-10-30 17:00,,PT_Normal,,,,,y2j+xyc+FUS1g3ozlOpF5w,,,,N,0,0,,,2012-06-06 13:54,2012-06-06 13:54,admin,admin
137,138887,4412,21827,5284,1,0,N,N,N,CP_Drtn,TT_Task,DT_FixedDUR2,RV_OK,TK_NotStart,A2520,dry mix paintings,,480,480,160,0,0,0,160,0,0,0,,,,2013-10-08 08:00,2013-10-30 17:00,,2013-07-30 08:00,2013-08-21 17:00,2013-07-30 08:00,2013-08-21 17:00,2013-07-30 08:00,2013-08-21 17:00,,2013-10-08 08:00,2013-10-30 17:00,,PT_Normal,,,,,jtZsy54Z0EqV/bQEmv+t5g,,,,N,0,0,,,2012-06-06 13:54,2012-06-06 13:54,admin,admin
138,138888,4412,21842,5284,1,0,N,N,N,CP_Drtn,TT_Task,DT_FixedDUR2,RV_OK,TK_NotStart,A2320,Excavation,,520,0,56,0,0,0,56,0,0,0,,,,2013-03-26 08:00,2013-04-02 17:00,,2013-01-09 08:00,2013-01-16 17:00,2013-01-09 08:00,2013-01-16 17:00,2013-01-09 08:00,2013-01-16 17:00,,2013-03-26 08:00,2013-04-02 17:00,,PT_Normal,,,,,rmroRPL5xUOuZl4QqiMSzQ,,,,N,0,0,,,2012-06-06 13:54,2012-06-06 13:54,admin,admin
139,138889,4412,21842,5284,1,0,N,N,N,CP_Drtn,TT_Task,DT_FixedDUR2,RV_OK,TK_NotStart,A2330,Soil replacement,,520,0,56,0,0,0,56,0,0,0,,,,2013-04-03 08:00,2013-04-10 17:00,,2013-01-17 08:00,2013-01-24 17:00,2013-01-17 08:00,2013-01-24 17:00,2013-01-17 08:00,2013-01-24 17:00,,2013-04-03 08:00,2013-04-10 17:00,,PT_Normal,,,,,GFIwesg+SkaFhhihQGKWzg,,,,N,0,0,,,2012-06-06 13:54,2012-06-06 13:54,admin,admin
140,138890,4412,21842,5284,1,0,N,N,N,CP_Drtn,TT_Task,DT_FixedDUR2,RV_OK,TK_NotStart,A2340,P.Cfootings,,520,0,56,0,0,0,56,0,0,0,,,,2013-04-11 08:00,2013-04-18 17:00,,2013-01-26 08:00,2013-02-02 17:00,2013-01-26 08:00,2013-02-02 17:00,2013-01-26 08:00,2013-02-02 17:00,,2013-04-11 08:00,2013-04-18 17:00,,PT_Normal,,,,,5adqTwsQFEy3Xe5qmAxJ9g,,,,N,0,0,,,2012-06-06 13:54,2012-06-06 13:54,admin,admin
141,138891,4412,21842,5284,1,0,N,N,N,CP_Drtn,TT_Task,DT_FixedDUR2,RV_OK,TK_NotStart,A2350,R.C footings,,520,0,112,0,0,0,112,0,0,0,,,,2013-04-20 08:00,2013-05-05 17:00,,2013-02-03 08:00,2013-02-18 17:00,2013-02-03 08:00,2013-02-18 17:00,2013-02-03 08:00,2013-02-18 17:00,,2013-04-20 08:00,2013-05-05 17:00,,PT_Normal,,,,,6VdLVpM0rkG1z6jVvRDaHg,,,,N,0,0,,,2012-06-06 13:54,2012-06-06 13:54,admin,admin
142,138892,4412,21842,5284,1,0,N,N,N,CP_Drtn,TT_Task,DT_FixedDUR2,RV_OK,TK_NotStart,A2360,R.C columns,,520,0,80,0,0,0,80,0,0,0,,,,2013-05-06 08:00,2013-05-16 17:00,,2013-02-19 08:00,2013-03-02 17:00,2013-02-19 08:00,2013-03-02 17:00,2013-02-19 08:00,2013-03-02 17:00,,2013-05-06 08:00,2013-05-16 17:00,,PT_Normal,,,,,/Spiz9gKckK/sEBHuQ+GFA,,,,N,0,0,,,2012-06-06 13:54,2012-06-06 13:54,admin,admin
143,138893,4412,21842,5284,1,0,N,N,N,CP_Drtn,TT_Task,DT_FixedDUR2,RV_OK,TK_NotStart,A2370,Bituminous insulation,,520,0,40,0,0,0,40,0,0,0,,,,2013-05-18 08:00,2013-05-22 17:00,,2013-03-03 08:00,2013-03-07 17:00,2013-03-03 08:00,2013-03-07 17:00,2013-03-03 08:00,2013-03-07 17:00,,2013-05-18 08:00,2013-05-22 17:00,,PT_Normal,,,,,JG+sceBlRkmK+JcSlw1nMA,,,,N,0,0,,,2012-06-06 13:54,2012-06-06 13:54,admin,admin
144,138894,4412,21842,5284,1,0,N,N,N,CP_Drtn,TT_Task,DT_FixedDUR2,RV_OK,TK_NotStart,A2380,Masonry under slab on grade,,520,0,80,0,0,0,80,0,0,0,,,,2013-05-23 08:00,2013-06-03 17:00,,2013-03-09 08:00,2013-03-19 17:00,2013-03-09 08:00,2013-03-19 17:00,2013-03-09 08:00,2013-03-19 17:00,,2013-05-23 08:00,2013-06-03 17:00,,PT_Normal,,,,,Nzxyvy11VE+ym1VFxpR0tw,,,,N,0,0,,,2012-06-06 13:54,2012-06-06 13:54,admin,admin
145,138895,4412,21842,5284,1,0,N,N,N,CP_Drtn,TT_Task,DT_FixedDUR2,RV_OK,TK_NotStart,A2390,Backfilling around foundation,,520,0,40,0,0,0,40,0,0,0,,,,2013-06-04 08:00,2013-06-09 17:00,,2013-03-20 08:00,2013-03-25 17:00,2013-03-20 08:00,2013-03-25 17:00,2013-03-20 08:00,2013-03-25 17:00,,2013-06-04 08:00,2013-06-09 17:00,,PT_Normal,,,,,thw+AgUe4EextMbN3PXZ9g,,,,N,0,0,,,2012-06-06 13:54,2012-06-06 13:54,admin,admin
146,138896,4412,21842,5284,1,0,N,N,N,CP_Drtn,TT_Task,DT_FixedDUR2,RV_OK,TK_NotStart,A2400,Slab on grade,,520,0,24,0,0,0,24,0,0,0,,,,2013-06-10 08:00,2013-06-12 17:00,,2013-03-26 08:00,2013-03-28 17:00,2013-03-26 08:00,2013-03-28 17:00,2013-03-26 08:00,2013-03-28 17:00,,2013-06-10 08:00,2013-06-12 17:00,,PT_Normal,,,,,AY6BC0QhO06NdY+nVyI6eA,,,,N,0,0,,,2012-06-06 13:54,2012-06-06 13:54,admin,admin
147,138897,4412,21842,5284,1,0,N,N,N,CP_Drtn,TT_Task,DT_FixedDUR2,RV_OK,TK_NotStart,A2410,Ground floor R.C slab,,520,0,160,0,0,0,160,0,0,0,,,,2013-06-13 08:00,2013-07-06 17:00,,2013-03-30 08:00,2013-04-21 17:00,2013-03-30 08:00,2013-04-21 17:00,2013-03-30 08:00,2013-04-21 17:00,,2013-06-13 08:00,2013-07-06 17:00,,PT_Normal,,,,,d4pk59oSfUydf0tEo+gSrA,,,,N,0,0,,,2012-06-06 13:54,2012-06-06 13:54,admin,admin
148,138898,4412,21843,5284,1,0,N,N,N,CP_Drtn,TT_Task,DT_FixedDUR2,RV_OK,TK_NotStart,A2420,Masonry works,,520,0,160,0,0,0,160,0,0,0,,,,2013-07-07 08:00,2013-07-29 17:00,,2013-04-22 08:00,2013-05-14 17:00,2013-04-22 08:00,2013-05-14 17:00,2013-04-22 08:00,2013-05-14 17:00,,2013-07-07 08:00,2013-07-29 17:00,,PT_Normal,,,,,OoyYpeObA0ae6bPGUlI1qg,,,,N,0,0,,,2012-06-06 13:54,2012-06-06 13:54,admin,admin
149,138899,4412,21843,5284,1,0,N,N,N,CP_Drtn,TT_Task,DT_FixedDUR2,RV_OK,TK_NotStart,A2430,Plaster works,,520,0,160,0,0,0,160,0,0,0,,,,2013-07-30 08:00,2013-08-21 17:00,,2013-05-15 08:00,2013-06-06 17:00,2013-05-15 08:00,2013-06-06 17:00,2013-05-15 08:00,2013-06-06 17:00,,2013-07-30 08:00,2013-08-21 17:00,,PT_Normal,,,,,vDEEt+Eul06YFT784dSbfQ,,,,N,0,0,,,2012-06-06 13:54,2012-06-06 13:54,admin,admin
150,138900,4412,21843,5284,1,0,N,N,N,CP_Drtn,TT_Task,DT_FixedDUR2,RV_OK,TK_NotStart,A2440,Finishing works,,520,520,480,0,0,0,480,0,0,0,,,,2013-08-22 08:00,2013-10-30 17:00,,2013-06-08 08:00,2013-08-15 17:00,2013-06-08 08:00,2013-08-15 17:00,2013-06-08 08:00,2013-08-15 17:00,,2013-08-22 08:00,2013-10-30 17:00,,PT_Normal,,,,,B0H9Miriv0ifNdVtl567bw,,,,N,0,0,,,2012-06-06 13:54,2012-06-06 13:54,admin,admin
151,138901,4412,21835,5284,1,0,N,N,N,CP_Drtn,TT_Task,DT_FixedDUR2,RV_OK,TK_NotStart,A2630,Membrane Insulation 4mm for toilets,,1576,0,160,0,0,0,160,0,0,0,,,,2013-09-10 08:00,2013-10-02 17:00,,2013-01-23 08:00,2013-02-14 17:00,2013-01-23 08:00,2013-02-14 17:00,2013-01-23 08:00,2013-02-14 17:00,,2013-09-10 08:00,2013-10-02 17:00,,PT_Normal,,,,,Oxj/bBAUzkihY/0w7HbGVw,,,,N,0,0,,,2012-06-06 13:54,2012-06-06 13:54,admin,admin
152,138902,4412,21835,5284,1,0,N,N,N,CP_Drtn,TT_Task,DT_FixedDUR2,RV_OK,TK_NotStart,A2640,Insulation works for roof,,2176,0,112,0,0,0,112,0,0,0,,,,2013-10-03 08:00,2013-10-19 17:00,,2012-11-20 08:00,2012-12-05 17:00,2012-11-20 08:00,2012-12-05 17:00,2012-11-20 08:00,2012-12-05 17:00,,2013-10-03 08:00,2013-10-19 17:00,,PT_Normal,,,,,jxUFTzDhtEG2QlggspgxwA,,,,N,0,0,,,2012-06-06 13:54,2012-06-06 13:54,admin,admin
153,138903,4412,21835,5284,1,0,N,N,N,CP_Drtn,TT_Task,DT_FixedDUR2,RV_OK,TK_NotStart,A2650,Internal Plaster works for wallls,,1000,0,400,0,0,0,400,0,0,0,,,,2013-06-18 08:00,2013-08-14 17:00,,2013-01-23 08:00,2013-03-21 17:00,2013-01-23 08:00,2013-03-21 17:00,2013-01-23 08:00,2013-03-21 17:00,,2013-06-18 08:00,2013-08-14 17:00,,PT_Normal,,,,,oYblhfHup0erbQXgn0r+Qg,,,,N,0,0,,,2012-06-06 13:54,2012-06-06 13:54,admin,admin
154,138904,4412,21835,5284,1,0,N,N,N,CP_Drtn,TT_Task,DT_FixedDUR2,RV_OK,TK_NotStart,A2660,External plaster Works (Dry Mix),,1640,640,288,0,0,0,288,0,0,0,,,,2013-09-19 08:00,2013-10-30 17:00,,2013-01-23 08:00,2013-03-05 17:00,2013-01-23 08:00,2013-03-05 17:00,2013-01-23 08:00,2013-03-05 17:00,,2013-09-19 08:00,2013-10-30 17:00,,PT_Normal,,,,,/xVsjbghA0CaOEWReR6j1w,,,,N,0,0,,,2012-06-06 13:54,2012-06-06 13:54,admin,admin
155,138905,4412,21835,5284,1,0,N,N,N,CP_Drtn,TT_Task,DT_FixedDUR2,RV_OK,TK_NotStart,A2670,Internal Paints for walls,,1000,0,168,0,0,0,168,0,0,0,,,,2013-08-15 08:00,2013-09-08 17:00,,2013-03-23 08:00,2013-04-15 17:00,2013-03-23 08:00,2013-04-15 17:00,2013-03-23 08:00,2013-04-15 17:00,,2013-08-15 08:00,2013-09-08 17:00,,PT_Normal,,,,,kwkDsNh0hUiZ/h+FBxAg8w,,,,N,0,0,,,2012-06-06 13:54,2012-06-06 13:54,admin,admin
156,138906,4412,21835,5284,1,0,N,N,N,CP_Drtn,TT_Task,DT_FixedDUR2,RV_OK,TK_NotStart,A2680,Suspend Ceiling works,,1000,0,128,0,0,0,128,0,0,0,,,,2013-08-15 08:00,2013-09-02 17:00,,2013-03-23 08:00,2013-04-09 17:00,2013-03-23 08:00,2013-04-09 17:00,2013-03-23 08:00,2013-04-09 17:00,,2013-08-15 08:00,2013-09-02 17:00,,PT_Normal,,,,,3MTn841bgk2DEscAWYa3bg,,,,N,0,0,,,2012-06-06 13:54,2012-06-06 13:54,admin,admin
157,138907,4412,21835,5284,1,0,N,N,N,CP_Drtn,TT_Task,DT_FixedDUR2,RV_OK,TK_NotStart,A2690,Ceramic works for floors,,1576,0,64,0,0,0,64,0,0,0,,,,2013-10-03 08:00,2013-10-12 17:00,,2013-02-16 08:00,2013-02-24 17:00,2013-02-16 08:00,2013-02-24 17:00,2013-02-16 08:00,2013-02-24 17:00,,2013-10-03 08:00,2013-10-12 17:00,,PT_Normal,,,,,yV//xNPjaECtcS7L4C6wGw,,,,N,0,0,,,2012-06-06 13:54,2012-06-06 13:54,admin,admin
158,138908,4412,21835,5284,1,0,N,N,N,CP_Drtn,TT_Task,DT_FixedDUR2,RV_OK,TK_NotStart,A2700,Ceramic works for walls,,1576,0,80,0,0,0,80,0,0,0,,,,2013-10-13 08:00,2013-10-23 17:00,,2013-02-25 08:00,2013-03-07 17:00,2013-02-25 08:00,2013-03-07 17:00,2013-02-25 08:00,2013-03-07 17:00,,2013-10-13 08:00,2013-10-23 17:00,,PT_Normal,,,,,Nletpwy1kEGi6DcgQ9kIAA,,,,N,0,0,,,2012-06-06 13:54,2012-06-06 13:54,admin,admin
159,138909,4412,21835,5284,1,0,N,N,N,CP_Drtn,TT_Task,DT_FixedDUR2,RV_OK,TK_NotStart,A2710,Epoxy paints for floors,,1000,0,120,0,0,0,120,0,0,0,,,,2013-09-09 08:00,2013-09-25 17:00,,2013-04-16 08:00,2013-05-02 17:00,2013-04-16 08:00,2013-05-02 17:00,2013-04-16 08:00,2013-05-02 17:00,,2013-09-09 08:00,2013-09-25 17:00,,PT_Normal,,,,,EEjk8XsWeU2sqINRzG+hkw,,,,N,0,0,,,2012-06-06 13:54,2012-06-06 13:54,admin,admin
160,138910,4412,21835,5284,1,0,N,N,N,CP_Drtn,TT_Task,DT_FixedDUR2,RV_OK,TK_NotStart,A2720,Steel Doors,,1000,0,240,0,0,0,240,0,0,0,,,,2013-09-26 08:00,2013-10-30 17:00,,2013-05-04 08:00,2013-06-06 17:00,2013-05-04 08:00,2013-06-06 17:00,2013-05-04 08:00,2013-06-06 17:00,,2013-09-26 08:00,2013-10-30 17:00,,PT_Normal,,,,,gh4oyPhvMEyJuR9KrMOeoQ,,,,N,0,0,,,2012-06-06 13:54,2012-06-06 13:54,admin,admin
161,138911,4412,21835,5284,1,0,N,N,N,CP_Drtn,TT_Task,DT_FixedDUR2,RV_OK,TK_NotStart,A2730,Timber Doors,,1144,144,96,0,0,0,96,0,0,0,,,,2013-10-17 08:00,2013-10-30 17:00,,2013-05-04 08:00,2013-05-16 17:00,2013-05-04 08:00,2013-05-16 17:00,2013-05-04 08:00,2013-05-16 17:00,,2013-10-17 08:00,2013-10-30 17:00,,PT_Normal,,,,,9zddps5S0EKJOHsawbgE0Q,,,,N,0,0,,,2012-06-06 13:54,2012-06-06 13:54,admin,admin
162,138912,4412,21835,5284,1,0,N,N,N,CP_Drtn,TT_Task,DT_FixedDUR2,RV_OK,TK_NotStart,A2740,Partition for Bathrooms,,1576,576,48,0,0,0,48,0,0,0,,,,2013-10-24 08:00,2013-10-30 17:00,,2013-03-09 08:00,2013-03-14 17:00,2013-03-09 08:00,2013-03-14 17:00,2013-03-09 08:00,2013-03-14 17:00,,2013-10-24 08:00,2013-10-30 17:00,,PT_Normal,,,,,RslGprgjakGzKUFOW94o3A,,,,N,0,0,,,2012-06-06 13:54,2012-06-06 13:54,admin,admin
163,138913,4412,21835,5284,1,0,N,N,N,CP_Drtn,TT_Task,DT_FixedDUR2,RV_OK,TK_NotStart,A2750,Aluminum Windows,,1112,112,56,0,0,0,56,0,0,0,,,,2013-09-01 08:00,2013-09-08 17:00,,2013-03-23 08:00,2013-03-30 17:00,2013-03-23 08:00,2013-03-30 17:00,2013-03-23 08:00,2013-03-30 17:00,,2013-09-01 08:00,2013-09-08 17:00,,PT_Normal,,,,,LaSryxk9yk6WAATspJIhOw,,,,N,0,0,,,2012-06-06 13:54,2012-06-06 13:54,admin,admin
164,138914,4412,21835,5284,1,0,N,N,N,CP_Drtn,TT_Task,DT_FixedDUR2,RV_OK,TK_NotStart,A2760,Terrazo tiles for roofs,,2176,1176,80,0,0,0,80,0,0,0,,,,2013-10-20 08:00,2013-10-30 17:00,,2012-12-06 08:00,2012-12-17 17:00,2012-12-06 08:00,2012-12-17 17:00,2012-12-06 08:00,2012-12-17 17:00,,2013-10-20 08:00,2013-10-30 17:00,,PT_Normal,,,,,GQ6dbtU4zkS05yPSJoIAbA,,,,N,0,0,,,2012-06-06 13:54,2012-06-06 13:54,admin,admin
165,138915,4412,21835,5284,1,0,N,N,N,CP_Drtn,TT_Task,DT_FixedDUR2,RV_OK,TK_NotStart,A2770,Glass partitions for secaretary room,,1376,376,24,0,0,0,24,0,0,0,,,,2013-10-28 08:00,2013-10-30 17:00,,2013-04-10 08:00,2013-04-13 17:00,2013-04-10 08:00,2013-04-13 17:00,2013-04-10 08:00,2013-04-13 17:00,,2013-10-28 08:00,2013-10-30 17:00,,PT_Normal,,,,,ngVaRZO3Rk++SCsmbH6P5w,,,,N,0,0,,,2012-06-06 13:54,2012-06-06 13:54,admin,admin
166,138916,4412,21835,5284,1,0,N,N,N,CP_Drtn,TT_Task,DT_FixedDUR2,RV_OK,TK_NotStart,A2780,Marble for External Elevations walls,,1728,728,80,0,0,0,80,0,0,0,,,,2013-10-20 08:00,2013-10-30 17:00,,2013-02-10 08:00,2013-02-20 17:00,2013-02-10 08:00,2013-02-20 17:00,2013-02-10 08:00,2013-02-20 17:00,,2013-10-20 08:00,2013-10-30 17:00,,PT_Normal,,,,,GPnoJyyxakqOHdQpWeyC1A,,,,N,0,0,,,2012-06-06 13:54,2012-06-06 13:54,admin,admin
167,138917,4412,21835,5284,1,0,N,N,N,CP_Drtn,TT_Task,DT_FixedDUR2,RV_OK,TK_NotStart,A2790,Metal Works (handrails),,1168,168,96,0,0,0,96,0,0,0,,,,2013-10-17 08:00,2013-10-30 17:00,,2013-04-30 08:00,2013-05-13 17:00,2013-04-30 08:00,2013-05-13 17:00,2013-04-30 08:00,2013-05-13 17:00,,2013-10-17 08:00,2013-10-30 17:00,,PT_Normal,,,,,LW8tJWiuUkCczlEFcVHzog,,,,N,0,0,,,2012-06-06 13:54,2012-06-06 13:54,admin,admin
168,138918,4412,21835,5284,0,0,N,N,N,CP_Drtn,TT_FinMile,DT_FixedDrtn,RV_OK,TK_NotStart,A2810,Complete finishing works,,1000,1000,0,0,0,0,0,0,0,0,,,,2013-10-30 17:00,2013-10-30 17:00,,2013-06-06 17:00,2013-06-06 17:00,2013-06-06 17:00,2013-06-06 17:00,2013-06-06 17:00,2013-06-06 17:00,,2013-10-30 17:00,2013-10-30 17:00,,PT_Normal,,,,,DLdHAqpiZkS+Wp86G1TJOQ,,,,N,0,0,,,2012-06-06 13:54,2012-06-06 13:54,admin,admin
169,138919,4412,21835,5284,1,0,N,N,N,CP_Drtn,TT_Task,DT_FixedDUR2,RV_OK,TK_NotStart,A2820,Marble for stairs,,1168,0,96,0,0,0,96,0,0,0,,,,2013-10-03 08:00,2013-10-16 17:00,,2013-04-16 08:00,2013-04-29 17:00,2013-04-16 08:00,2013-04-29 17:00,2013-04-16 08:00,2013-04-29 17:00,,2013-10-03 08:00,2013-10-16 17:00,,PT_Normal,,,,,Xf8Jp333TkGk8jVKHT/n7Q,,,,N,0,0,,,2012-06-06 13:54,2012-06-06 13:54,admin,admin
170,138920,4412,21848,5284,1,0,N,N,N,CP_Drtn,TT_Task,DT_FixedDUR2,RV_OK,TK_NotStart,A3040,Masonry works,,416,0,96,0,0,0,96,0,0,0,,,,2013-07-28 08:00,2013-08-10 17:00,,2013-05-28 08:00,2013-06-10 17:00,2013-05-28 08:00,2013-06-10 17:00,2013-05-28 08:00,2013-06-10 17:00,,2013-07-28 08:00,2013-08-10 17:00,,PT_Normal,,,,,1n11P9ipEU6AkADhScolMg,sHmfQlTeRu6FC8dniuo78A,,,N,0,0,,,2012-06-06 13:54,2012-06-06 13:54,admin,admin
171,138921,4412,21848,5284,1,0,N,N,N,CP_Drtn,TT_Task,DT_FixedDUR2,RV_OK,TK_NotStart,A3050,Insulation works for roof,,1208,0,96,0,0,0,96,0,0,0,,,,2013-10-03 08:00,2013-10-16 17:00,,2013-04-10 08:00,2013-04-23 17:00,2013-04-10 08:00,2013-04-23 17:00,2013-04-10 08:00,2013-04-23 17:00,,2013-10-03 08:00,2013-10-16 17:00,,PT_Normal,,,,,MRjIjAKSRE2713i558AOUw,MjEbytV+JUuCSFiV0jLhtw,,,N,0,0,,,2012-06-06 13:54,2012-06-06 13:54,admin,admin
172,138922,4412,21848,5284,1,0,N,N,N,CP_Drtn,TT_Task,DT_FixedDUR2,RV_OK,TK_NotStart,A3080,Internal Plaster works for wallls,,416,0,160,0,0,0,160,0,0,0,,,,2013-08-11 08:00,2013-09-02 17:00,,2013-06-11 08:00,2013-07-03 17:00,2013-06-11 08:00,2013-07-03 17:00,2013-06-11 08:00,2013-07-03 17:00,,2013-08-11 08:00,2013-09-02 17:00,,PT_Normal,,,,,NGk3ZxqjR0SBkJAtyqdToA,M3WA9X2/nEO0+8zdCkcSvg,,,N,0,0,,,2012-06-06 13:54,2012-06-06 13:54,admin,admin
173,138923,4412,21848,5284,1,0,N,N,N,CP_Drtn,TT_Task,DT_FixedDUR2,RV_OK,TK_NotStart,A3090,External plaster Works + Dry Mix,,736,320,240,0,0,0,240,0,0,0,,,,2013-09-26 08:00,2013-10-30 17:00,,2013-06-11 08:00,2013-07-15 17:00,2013-06-11 08:00,2013-07-15 17:00,2013-06-11 08:00,2013-07-15 17:00,,2013-09-26 08:00,2013-10-30 17:00,,PT_Normal,,,,,Tcit5aInkkW6I8ui2BDHzQ,UiOMgwd/jEyENQiWYFefXg,,,N,0,0,,,2012-06-06 13:54,2012-06-06 13:54,admin,admin
174,138924,4412,21848,5284,1,0,N,N,N,CP_Drtn,TT_Task,DT_FixedDUR2,RV_OK,TK_NotStart,A3140,Internal Paints for walls,,416,0,144,0,0,0,144,0,0,0,,,,2013-09-03 08:00,2013-09-23 17:00,,2013-07-04 08:00,2013-07-24 17:00,2013-07-04 08:00,2013-07-24 17:00,2013-07-04 08:00,2013-07-24 17:00,,2013-09-03 08:00,2013-09-23 17:00,,PT_Normal,,,,,OwisBHR1SUSMfTGCzfSTiA,ZB0ZMo1bM02HVxje3tnLyA,,,N,0,0,,,2012-06-06 13:54,2012-06-06 13:54,admin,admin
175,138925,4412,21848,5284,1,0,N,N,N,CP_Drtn,TT_Task,DT_FixedDUR2,RV_OK,TK_NotStart,A3180,Epoxy paints for floors,,416,0,160,0,0,0,160,0,0,0,,,,2013-09-24 08:00,2013-10-16 17:00,,2013-07-25 08:00,2013-08-17 17:00,2013-07-25 08:00,2013-08-17 17:00,2013-07-25 08:00,2013-08-17 17:00,,2013-09-24 08:00,2013-10-16 17:00,,PT_Normal,,,,,L/SdQp19lEWgh86ZWaWbXQ,Za3r35sA6kmWh0cIUd8f9A,,,N,0,0,,,2012-06-06 13:54,2012-06-06 13:54,admin,admin
176,138926,4412,21848,5284,1,0,N,N,N,CP_Drtn,TT_Task,DT_FixedDUR2,RV_OK,TK_NotStart,A3210,Steel Doors,,416,0,96,0,0,0,96,0,0,0,,,,2013-10-17 08:00,2013-10-30 17:00,,2013-08-18 08:00,2013-08-31 17:00,2013-08-18 08:00,2013-08-31 17:00,2013-08-18 08:00,2013-08-31 17:00,,2013-10-17 08:00,2013-10-30 17:00,,PT_Normal,,,,,7AhzB8BzD02mZVF6BkFMKg,0rHajqsV0kGDe3uh+TqT5A,,,N,0,0,,,2012-06-06 13:54,2012-06-06 13:54,admin,admin
177,138927,4412,21848,5284,1,0,N,N,N,CP_Drtn,TT_Task,DT_FixedDUR2,RV_OK,TK_NotStart,A3160,Aluminum Windows,,448,32,112,0,0,0,112,0,0,0,,,,2013-09-08 08:00,2013-09-23 17:00,,2013-07-04 08:00,2013-07-20 17:00,2013-07-04 08:00,2013-07-20 17:00,2013-07-04 08:00,2013-07-20 17:00,,2013-09-08 08:00,2013-09-23 17:00,,PT_Normal,,,,,ntDa14YfsUiSeD0xx7esMg,DT75H7oLhkGn8Jf3+Tz0bQ,,,N,0,0,,,2012-06-06 13:54,2012-06-06 13:54,admin,admin
178,138928,4412,21848,5284,1,0,N,N,N,CP_Drtn,TT_Task,DT_FixedDUR2,RV_OK,TK_NotStart,A3060,Terrazo tiles for roofs,,1208,792,96,0,0,0,96,0,0,0,,,,2013-10-17 08:00,2013-10-30 17:00,,2013-04-24 08:00,2013-05-07 17:00,2013-04-24 08:00,2013-05-07 17:00,2013-04-24 08:00,2013-05-07 17:00,,2013-10-17 08:00,2013-10-30 17:00,,PT_Normal,,,,,4poVvxXcxkG5vW/bjDuqgw,S5QqcMFGaU6neW1Br6mc3Q,,,N,0,0,,,2012-06-06 13:54,2012-06-06 13:54,admin,admin
179,138929,4412,21848,5284,1,0,N,N,N,CP_Drtn,TT_Task,DT_FixedDUR2,RV_OK,TK_NotStart,A3100,Marble for External Elevations walls,,840,424,16,0,0,0,16,0,0,0,,,,2013-10-29 08:00,2013-10-30 17:00,,2013-06-29 08:00,2013-06-30 17:00,2013-06-29 08:00,2013-06-30 17:00,2013-06-29 08:00,2013-06-30 17:00,,2013-10-29 08:00,2013-10-30 17:00,,PT_Normal,,,,,AF7dPjN7MEeUi5PqgGhtIw,w/VsvyTjoUOaX0wul4NFJA,,,N,0,0,,,2012-06-06 13:54,2012-06-06 13:54,admin,admin
180,138930,4412,21848,5284,0,0,N,N,N,CP_Drtn,TT_FinMile,DT_FixedDrtn,RV_OK,TK_NotStart,A3230,Complete finishing works,,416,416,0,0,0,0,0,0,0,0,,,,2013-10-30 17:00,2013-10-30 17:00,,2013-08-31 17:00,2013-08-31 17:00,2013-08-31 17:00,2013-08-31 17:00,2013-08-31 17:00,2013-08-31 17:00,,2013-10-30 17:00,2013-10-30 17:00,,PT_Normal,,,,,CYnYd84pxkCIMnL7Eu47gQ,tsZrfqF1ekylBawMtEfN+A,,,N,0,0,,,2012-06-06 13:54,2012-06-06 13:54,admin,admin
181,138931,4412,21848,5284,1,0,N,N,N,CP_Drtn,TT_Task,DT_FixedDUR2,RV_OK,TK_NotStart,A3240,Corrugated sheets cladding,,416,0,128,0,0,0,128,0,0,0,,,,2013-07-09 08:00,2013-07-27 17:00,,2013-05-09 08:00,2013-05-27 17:00,2013-05-09 08:00,2013-05-27 17:00,2013-05-09 08:00,2013-05-27 17:00,,2013-07-09 08:00,2013-07-27 17:00,,PT_Normal,,,,,ZljHpP43f0qitl+QngsWYQ,,,,N,0,0,,,2012-06-06 13:54,2012-06-06 13:54,admin,admin
182,138932,4412,21854,5284,1,0,N,N,N,CP_Drtn,TT_Task,DT_FixedDUR2,RV_OK,TK_NotStart,A3280,Masonry works,,1000,0,96,0,0,0,96,0,0,0,,,,2013-07-24 08:00,2013-08-06 17:00,,2013-02-28 08:00,2013-03-13 17:00,2013-02-28 08:00,2013-03-13 17:00,2013-02-28 08:00,2013-03-13 17:00,,2013-07-24 08:00,2013-08-06 17:00,,PT_Normal,,,,,2apdiTJxM02BF1CXaiDXGw,Xu50ygvC3k6Z01OIn2Fy8Q,,,N,0,0,,,2012-06-06 13:54,2012-06-06 13:54,admin,admin
183,138933,4412,21854,5284,1,0,N,N,N,CP_Drtn,TT_Task,DT_FixedDUR2,RV_OK,TK_NotStart,A3250,Insulation works for roof,,1648,0,96,0,0,0,96,0,0,0,,,,2013-09-26 08:00,2013-10-09 17:00,,2013-01-29 08:00,2013-02-11 17:00,2013-01-29 08:00,2013-02-11 17:00,2013-01-29 08:00,2013-02-11 17:00,,2013-09-26 08:00,2013-10-09 17:00,,PT_Normal,,,,,I7P+wAXFxk66/WDayzsZkg,ODLCUVwn+UOL3hjiKSaCxA,,,N,0,0,,,2012-06-06 13:54,2012-06-06 13:54,admin,admin
184,138934,4412,21854,5284,1,0,N,N,N,CP_Drtn,TT_Task,DT_FixedDUR2,RV_OK,TK_NotStart,A3290,Internal Plaster works for wallls,,1000,0,160,0,0,0,160,0,0,0,,,,2013-08-07 08:00,2013-08-29 17:00,,2013-03-14 08:00,2013-04-06 17:00,2013-03-14 08:00,2013-04-06 17:00,2013-03-14 08:00,2013-04-06 17:00,,2013-08-07 08:00,2013-08-29 17:00,,PT_Normal,,,,,miCgXXM+JE+CCx7jFTu6cg,pFxKiCoVFEiR2JSUPgyT/Q,,,N,0,0,,,2012-06-06 13:54,2012-06-06 13:54,admin,admin
185,138935,4412,21854,5284,1,0,N,N,N,CP_Drtn,TT_Task,DT_FixedDUR2,RV_OK,TK_NotStart,A3300,External plaster Works + Dry Mix,,1344,344,240,0,0,0,240,0,0,0,,,,2013-09-26 08:00,2013-10-30 17:00,,2013-03-14 08:00,2013-04-17 17:00,2013-03-14 08:00,2013-04-17 17:00,2013-03-14 08:00,2013-04-17 17:00,,2013-09-26 08:00,2013-10-30 17:00,,PT_Normal,,,,,X5eVlD6Us0GSC/gPJAKTwQ,XfLnsprT2EmFFbklqTpsOA,,,N,0,0,,,2012-06-06 13:54,2012-06-06 13:54,admin,admin
186,138936,4412,21854,5284,1,0,N,N,N,CP_Drtn,TT_Task,DT_FixedDUR2,RV_OK,TK_NotStart,A3320,Internal Paints for walls,,1000,0,144,0,0,0,144,0,0,0,,,,2013-08-31 08:00,2013-09-19 17:00,,2013-04-07 08:00,2013-04-27 17:00,2013-04-07 08:00,2013-04-27 17:00,2013-04-07 08:00,2013-04-27 17:00,,2013-08-31 08:00,2013-09-19 17:00,,PT_Normal,,,,,BsSjVWdaQ0mTc16EojIWvQ,Dy87zo6Am0W/AOo4g1tSOA,,,N,0,0,,,2012-06-06 13:54,2012-06-06 13:54,admin,admin
187,138937,4412,21854,5284,1,0,N,N,N,CP_Drtn,TT_Task,DT_FixedDUR2,RV_OK,TK_NotStart,A3340,Epoxy paints for floors,,1000,0,200,0,0,0,200,0,0,0,,,,2013-09-21 08:00,2013-10-19 17:00,,2013-04-28 08:00,2013-05-26 17:00,2013-04-28 08:00,2013-05-26 17:00,2013-04-28 08:00,2013-05-26 17:00,,2013-09-21 08:00,2013-10-19 17:00,,PT_Normal,,,,,bw4WiTsIwkWhYrDKx8dUYA,l/afxYpHRk2BzUFHHYWaXA,,,N,0,0,,,2012-06-06 13:54,2012-06-06 13:54,admin,admin
188,138938,4412,21854,5284,1,0,N,N,N,CP_Drtn,TT_Task,DT_FixedDUR2,RV_OK,TK_NotStart,A3350,Steel Doors,,1000,0,80,0,0,0,80,0,0,0,,,,2013-10-20 08:00,2013-10-30 17:00,,2013-05-27 08:00,2013-06-06 17:00,2013-05-27 08:00,2013-06-06 17:00,2013-05-27 08:00,2013-06-06 17:00,,2013-10-20 08:00,2013-10-30 17:00,,PT_Normal,,,,,YCoEFUWomU2yAXbyV7FJoA,R7skNQn9H0uknfJ3i9xQrA,,,N,0,0,,,2012-06-06 13:54,2012-06-06 13:54,admin,admin
189,138939,4412,21854,5284,1,0,N,N,N,CP_Drtn,TT_Task,DT_FixedDUR2,RV_OK,TK_NotStart,A3330,Aluminum Windows,,1032,32,112,0,0,0,112,0,0,0,,,,2013-09-04 08:00,2013-09-19 17:00,,2013-04-07 08:00,2013-04-22 17:00,2013-04-07 08:00,2013-04-22 17:00,2013-04-07 08:00,2013-04-22 17:00,,2013-09-04 08:00,2013-09-19 17:00,,PT_Normal,,,,,SPW7y7vzbkqNsK4fE1krdw,fDBb8g74w0+gQur9bktFWw,,,N,0,0,,,2012-06-06 13:54,2012-06-06 13:54,admin,admin
190,138940,4412,21854,5284,1,0,N,N,N,CP_Drtn,TT_Task,DT_FixedDUR2,RV_OK,TK_NotStart,A3260,Terrazo tiles for roofs,,1648,648,144,0,0,0,144,0,0,0,,,,2013-10-10 08:00,2013-10-30 17:00,,2013-02-12 08:00,2013-03-04 17:00,2013-02-12 08:00,2013-03-04 17:00,2013-02-12 08:00,2013-03-04 17:00,,2013-10-10 08:00,2013-10-30 17:00,,PT_Normal,,,,,9C1xUgzoLkeCKbAIIEUVgg,2+nHWfrmtU6jm59pcvWPew,,,N,0,0,,,2012-06-06 13:54,2012-06-06 13:54,admin,admin
191,138941,4412,21854,5284,1,0,N,N,N,CP_Drtn,TT_Task,DT_FixedDUR2,RV_OK,TK_NotStart,A3310,Marble for External Elevations walls,,1440,440,24,0,0,0,24,0,0,0,,,,2013-10-28 08:00,2013-10-30 17:00,,2013-04-01 08:00,2013-04-03 17:00,2013-04-01 08:00,2013-04-03 17:00,2013-04-01 08:00,2013-04-03 17:00,,2013-10-28 08:00,2013-10-30 17:00,,PT_Normal,,,,,QkPhLNd2RE2zYVU7TzlXAQ,7M1U68nHNU+jQ4G1MH3FMA,,,N,0,0,,,2012-06-06 13:54,2012-06-06 13:54,admin,admin
192,138942,4412,21854,5284,0,0,N,N,N,CP_Drtn,TT_FinMile,DT_FixedDrtn,RV_OK,TK_NotStart,A3360,Complete finishing works,,1000,1000,0,0,0,0,0,0,0,0,,,,2013-10-30 17:00,2013-10-30 17:00,,2013-06-06 17:00,2013-06-06 17:00,2013-06-06 17:00,2013-06-06 17:00,2013-06-06 17:00,2013-06-06 17:00,,2013-10-30 17:00,2013-10-30 17:00,,PT_Normal,,,,,ArfY6lpb+0qr5tniOdw1IQ,0ZDBVYfW8kONCqfTIwNHMg,,,N,0,0,,,2012-06-06 13:54,2012-06-06 13:54,admin,admin
193,138943,4412,21854,5284,1,0,N,N,N,CP_Drtn,TT_Task,DT_FixedDUR2,RV_OK,TK_NotStart,A3270,Corrugated sheets cladding,,1000,0,128,0,0,0,128,0,0,0,,,,2013-07-06 08:00,2013-07-23 17:00,,2013-02-10 08:00,2013-02-27 17:00,2013-02-10 08:00,2013-02-27 17:00,2013-02-10 08:00,2013-02-27 17:00,,2013-07-06 08:00,2013-07-23 17:00,,PT_Normal,,,,,waUthx+rYU+qXYbYxRPCQA,UXQQe3MWwUqDjdjnklxm7g,,,N,0,0,,,2012-06-06 13:54,2012-06-06 13:54,admin,admin
194,138944,4412,21851,5284,1,0,N,N,N,CP_Drtn,TT_Task,DT_FixedDUR2,RV_OK,TK_NotStart,A3400,Masonry works,,768,0,96,0,0,0,96,0,0,0,,,,2013-08-08 08:00,2013-08-21 17:00,,2013-04-18 08:00,2013-05-01 17:00,2013-04-18 08:00,2013-05-01 17:00,2013-04-18 08:00,2013-05-01 17:00,,2013-08-08 08:00,2013-08-21 17:00,,PT_Normal,,,,,TuG5FG4gsEyfI9UesaMC9Q,ASTEGqXYQ0Sw/K0++S+5jw,,,N,0,0,,,2012-06-06 13:54,2012-06-06 13:54,admin,admin
195,138945,4412,21851,5284,1,0,N,N,N,CP_Drtn,TT_Task,DT_FixedDUR2,RV_OK,TK_NotStart,A3370,Insulation works for roof,,1376,0,128,0,0,0,128,0,0,0,,,,2013-09-19 08:00,2013-10-07 17:00,,2013-03-03 08:00,2013-03-20 17:00,2013-03-03 08:00,2013-03-20 17:00,2013-03-03 08:00,2013-03-20 17:00,,2013-09-19 08:00,2013-10-07 17:00,,PT_Normal,,,,,PPoOsD5pkkmbrxDpG2GKPg,eoCzQ86uGkmeaPwwAGkMzQ,,,N,0,0,,,2012-06-06 13:54,2012-06-06 13:54,admin,admin
196,138946,4412,21851,5284,1,0,N,N,N,CP_Drtn,TT_Task,DT_FixedDUR2,RV_OK,TK_NotStart,A3410,Internal Plaster works for wallls,,768,0,112,0,0,0,112,0,0,0,,,,2013-08-22 08:00,2013-09-07 17:00,,2013-05-02 08:00,2013-05-18 17:00,2013-05-02 08:00,2013-05-18 17:00,2013-05-02 08:00,2013-05-18 17:00,,2013-08-22 08:00,2013-09-07 17:00,,PT_Normal,,,,,HvQYVq3zJ0SDrp7pi3XUHQ,qyMNBwF8jkOcpIBJgUeXhw,,,N,0,0,,,2012-06-06 13:54,2012-06-06 13:54,admin,admin
197,138947,4412,21851,5284,1,0,N,N,N,CP_Drtn,TT_Task,DT_FixedDUR2,RV_OK,TK_NotStart,A3420,External plaster Works + Dry Mix,,1048,280,200,0,0,0,200,0,0,0,,,,2013-10-02 08:00,2013-10-30 17:00,,2013-05-02 08:00,2013-05-30 17:00,2013-05-02 08:00,2013-05-30 17:00,2013-05-02 08:00,2013-05-30 17:00,,2013-10-02 08:00,2013-10-30 17:00,,PT_Normal,,,,,1eRVEU7c8U2O/SAHLxkTNQ,607cnUEzUEykAxtvicIoJQ,,,N,0,0,,,2012-06-06 13:54,2012-06-06 13:54,admin,admin
198,138948,4412,21851,5284,1,0,N,N,N,CP_Drtn,TT_Task,DT_FixedDUR2,RV_OK,TK_NotStart,A3440,Internal Paints for walls,,768,0,144,0,0,0,144,0,0,0,,,,2013-09-08 08:00,2013-09-28 17:00,,2013-05-19 08:00,2013-06-08 17:00,2013-05-19 08:00,2013-06-08 17:00,2013-05-19 08:00,2013-06-08 17:00,,2013-09-08 08:00,2013-09-28 17:00,,PT_Normal,,,,,ysR2LbusCUGSGtrbs8/t3A,FXDEAWEZ1EO2QXgPv52KKg,,,N,0,0,,,2012-06-06 13:54,2012-06-06 13:54,admin,admin
199,138949,4412,21851,5284,1,0,N,N,N,CP_Drtn,TT_Task,DT_FixedDUR2,RV_OK,TK_NotStart,A3460,Epoxy paints for floors,,768,0,200,0,0,0,200,0,0,0,,,,2013-09-29 08:00,2013-10-27 17:00,,2013-06-09 08:00,2013-07-07 17:00,2013-06-09 08:00,2013-07-07 17:00,2013-06-09 08:00,2013-07-07 17:00,,2013-09-29 08:00,2013-10-27 17:00,,PT_Normal,,,,,7jbNoFvk9UK/5G3NMNUtOg,Wudf6QcibkaKSyFOA0EOSg,,,N,0,0,,,2012-06-06 13:54,2012-06-06 13:54,admin,admin
200,138950,4412,21851,5284,1,0,N,N,N,CP_Drtn,TT_Task,DT_FixedDUR2,RV_OK,TK_NotStart,A3470,Steel Doors,,768,0,24,0,0,0,24,0,0,0,,,,2013-10-28 08:00,2013-10-30 17:00,,2013-07-08 08:00,2013-07-10 17:00,2013-07-08 08:00,2013-07-10 17:00,2013-07-08 08:00,2013-07-10 17:00,,2013-10-28 08:00,2013-10-30 17:00,,PT_Normal,,,,,ANm98ER42kaZUv5RlNscNA,UPmxuPXJpk2Kw8GDCb25YA,,,N,0,0,,,2012-06-06 13:54,2012-06-06 13:54,admin,admin
201,138951,4412,21851,5284,1,0,N,N,N,CP_Drtn,TT_Task,DT_FixedDUR2,RV_OK,TK_NotStart,A3390,Terrazo tiles for roofs,,1376,608,160,0,0,0,160,0,0,0,,,,2013-10-08 08:00,2013-10-30 17:00,,2013-03-21 08:00,2013-04-13 17:00,2013-03-21 08:00,2013-04-13 17:00,2013-03-21 08:00,2013-04-13 17:00,,2013-10-08 08:00,2013-10-30 17:00,,PT_Normal,,,,,Ahlb6gIf30avdXDaCGT+Tg,fcPUVQ0LQka7Shse96MF7w,,,N,0,0,,,2012-06-06 13:54,2012-06-06 13:54,admin,admin
202,138952,4412,21851,5284,1,0,N,N,N,CP_Drtn,TT_Task,DT_FixedDUR2,RV_OK,TK_NotStart,A3430,Marble for External Elevations walls,,1032,264,96,0,0,0,96,0,0,0,,,,2013-10-17 08:00,2013-10-30 17:00,,2013-05-20 08:00,2013-06-02 17:00,2013-05-20 08:00,2013-06-02 17:00,2013-05-20 08:00,2013-06-02 17:00,,2013-10-17 08:00,2013-10-30 17:00,,PT_Normal,,,,,Q99o3dvdNUGHSu1KMePloA,8wK2X7Jtb0SAi6DPwIy1uA,,,N,0,0,,,2012-06-06 13:54,2012-06-06 13:54,admin,admin
203,138953,4412,21851,5284,0,0,N,N,N,CP_Drtn,TT_FinMile,DT_FixedDrtn,RV_OK,TK_NotStart,A3480,Complete finishing works,,768,768,0,0,0,0,0,0,0,0,,,,2013-10-30 17:00,2013-10-30 17:00,,2013-07-10 17:00,2013-07-10 17:00,2013-07-10 17:00,2013-07-10 17:00,2013-07-10 17:00,2013-07-10 17:00,,2013-10-30 17:00,2013-10-30 17:00,,PT_Normal,,,,,fqlMdSmxokaXHq/+vSVeCQ,PdV+Cg/JXEO+kO3VI/BMkA,,,N,0,0,,,2012-06-06 13:54,2012-06-06 13:54,admin,admin
204,138954,4412,21851,5284,1,0,N,N,N,CP_Drtn,TT_Task,DT_FixedDUR2,RV_OK,TK_NotStart,A3380,Corrugated sheets cladding,,768,0,128,0,0,0,128,0,0,0,,,,2013-07-21 08:00,2013-08-07 17:00,,2013-03-31 08:00,2013-04-17 17:00,2013-03-31 08:00,2013-04-17 17:00,2013-03-31 08:00,2013-04-17 17:00,,2013-07-21 08:00,2013-08-07 17:00,,PT_Normal,,,,,k1bf/1AlxEiIXGLgRE8Bzw,tSajjNS25kK8skua/+zD+g,,,N,0,0,,,2012-06-06 13:54,2012-06-06 13:54,admin,admin
205,138955,4412,21853,5284,1,0,N,N,N,CP_Drtn,TT_Task,DT_FixedDUR2,RV_OK,TK_NotStart,A3520,Masonry works,,952,0,112,0,0,0,112,0,0,0,,,,2013-06-16 08:00,2013-07-01 17:00,,2013-01-28 08:00,2013-02-12 17:00,2013-01-28 08:00,2013-02-12 17:00,2013-01-28 08:00,2013-02-12 17:00,,2013-06-16 08:00,2013-07-01 17:00,,PT_Normal,,,,,+p4mjcMHw0Su9Z1RlsKljg,Xu50ygvC3k6Z01OIn2Fy8Q,,,N,0,0,,,2012-06-06 13:54,2012-06-06 13:54,admin,admin
206,138956,4412,21853,5284,1,0,N,N,N,CP_Drtn,TT_Task,DT_FixedDUR2,RV_OK,TK_NotStart,A3490,Insulation works for roof,,1752,0,240,0,0,0,240,0,0,0,,,,2013-08-17 08:00,2013-09-19 17:00,,2012-12-04 08:00,2013-01-07 17:00,2012-12-04 08:00,2013-01-07 17:00,2012-12-04 08:00,2013-01-07 17:00,,2013-08-17 08:00,2013-09-19 17:00,,PT_Normal,,,,,6jAVykiq5Ey7BqzJVO16Ig,ODLCUVwn+UOL3hjiKSaCxA,,,N,0,0,,,2012-06-06 13:54,2012-06-06 13:54,admin,admin
207,138957,4412,21853,5284,1,0,N,N,N,CP_Drtn,TT_Task,DT_FixedDUR2,RV_OK,TK_NotStart,A3530,Internal Plaster works for wallls,,952,0,240,0,0,0,240,0,0,0,,,,2013-07-02 08:00,2013-08-05 17:00,,2013-02-13 08:00,2013-03-19 17:00,2013-02-13 08:00,2013-03-19 17:00,2013-02-13 08:00,2013-03-19 17:00,,2013-07-02 08:00,2013-08-05 17:00,,PT_Normal,,,,,EhjZ+GZ+TEu6BYjkx/f6tA,pFxKiCoVFEiR2JSUPgyT/Q,,,N,0,0,,,2012-06-06 13:54,2012-06-06 13:54,admin,admin
208,138958,4412,21853,5284,1,0,N,N,N,CP_Drtn,TT_Task,DT_FixedDUR2,RV_OK,TK_NotStart,A3540,External plaster Works + Dry Mix,,1464,512,320,0,0,0,320,0,0,0,,,,2013-09-15 08:00,2013-10-30 17:00,,2013-02-13 08:00,2013-03-31 17:00,2013-02-13 08:00,2013-03-31 17:00,2013-02-13 08:00,2013-03-31 17:00,,2013-09-15 08:00,2013-10-30 17:00,,PT_Normal,,,,,f9HdEErHVE2pR7rrw6ysnw,XfLnsprT2EmFFbklqTpsOA,,,N,0,0,,,2012-06-06 13:54,2012-06-06 13:54,admin,admin
209,138959,4412,21853,5284,1,0,N,N,N,CP_Drtn,TT_Task,DT_FixedDUR2,RV_OK,TK_NotStart,A3560,Internal Paints for walls,,952,0,160,0,0,0,160,0,0,0,,,,2013-08-06 08:00,2013-08-28 17:00,,2013-03-20 08:00,2013-04-11 17:00,2013-03-20 08:00,2013-04-11 17:00,2013-03-20 08:00,2013-04-11 17:00,,2013-08-06 08:00,2013-08-28 17:00,,PT_Normal,,,,,6zAxFW5EIU2783UK2DCuqw,Dy87zo6Am0W/AOo4g1tSOA,,,N,0,0,,,2012-06-06 13:54,2012-06-06 13:54,admin,admin
210,138960,4412,21853,5284,1,0,N,N,N,CP_Drtn,TT_Task,DT_FixedDUR2,RV_OK,TK_NotStart,A3580,Epoxy paints for floors,,952,0,320,0,0,0,320,0,0,0,,,,2013-08-29 08:00,2013-10-14 17:00,,2013-04-13 08:00,2013-05-28 17:00,2013-04-13 08:00,2013-05-28 17:00,2013-04-13 08:00,2013-05-28 17:00,,2013-08-29 08:00,2013-10-14 17:00,,PT_Normal,,,,,iSd0o8LulUuAASdalM2A6Q,l/afxYpHRk2BzUFHHYWaXA,,,N,0,0,,,2012-06-06 13:54,2012-06-06 13:54,admin,admin
211,138961,4412,21853,5284,1,0,N,N,N,CP_Drtn,TT_Task,DT_FixedDUR2,RV_OK,TK_NotStart,A3590,Steel Doors,,952,0,112,0,0,0,112,0,0,0,,,,2013-10-15 08:00,2013-10-30 17:00,,2013-05-29 08:00,2013-06-13 17:00,2013-05-29 08:00,2013-06-13 17:00,2013-05-29 08:00,2013-06-13 17:00,,2013-10-15 08:00,2013-10-30 17:00,,PT_Normal,,,,,PZ/+xcuTLk+CVVQgQ5hSwg,R7skNQn9H0uknfJ3i9xQrA,,,N,0,0,,,2012-06-06 13:54,2012-06-06 13:54,admin,admin
212,138962,4412,21853,5284,1,0,N,N,N,CP_Drtn,TT_Task,DT_FixedDUR2,RV_OK,TK_NotStart,A3570,Aluminum Windows,,1016,64,96,0,0,0,96,0,0,0,,,,2013-08-15 08:00,2013-08-28 17:00,,2013-03-20 08:00,2013-04-02 17:00,2013-03-20 08:00,2013-04-02 17:00,2013-03-20 08:00,2013-04-02 17:00,,2013-08-15 08:00,2013-08-28 17:00,,PT_Normal,,,,,mOF42iHRg0+p27nhcjn5zg,fDBb8g74w0+gQur9bktFWw,,,N,0,0,,,2012-06-06 13:54,2012-06-06 13:54,admin,admin
213,138963,4412,21853,5284,1,0,N,N,N,CP_Drtn,TT_Task,DT_FixedDUR2,RV_OK,TK_NotStart,A3500,Terrazo tiles for roofs,,1752,800,280,0,0,0,280,0,0,0,,,,2013-09-21 08:00,2013-10-30 17:00,,2013-01-08 08:00,2013-02-17 17:00,2013-01-08 08:00,2013-02-17 17:00,2013-01-08 08:00,2013-02-17 17:00,,2013-09-21 08:00,2013-10-30 17:00,,PT_Normal,,,,,6SpObyvch0CdiWzDB0ka1g,2+nHWfrmtU6jm59pcvWPew,,,N,0,0,,,2012-06-06 13:54,2012-06-06 13:54,admin,admin
214,138964,4412,21853,5284,1,0,N,N,N,CP_Drtn,TT_Task,DT_FixedDUR2,RV_OK,TK_NotStart,A3550,Marble Cladding for External Elevations walls,,1600,648,64,0,0,0,64,0,0,0,,,,2013-10-22 08:00,2013-10-30 17:00,,2013-03-03 08:00,2013-03-11 17:00,2013-03-03 08:00,2013-03-11 17:00,2013-03-03 08:00,2013-03-11 17:00,,2013-10-22 08:00,2013-10-30 17:00,,PT_Normal,,,,,1PI6wc8HzUmNyMcSVfLJbg,7M1U68nHNU+jQ4G1MH3FMA,,,N,0,0,,,2012-06-06 13:54,2012-06-06 13:54,admin,admin
215,138965,4412,21853,5284,0,0,N,N,N,CP_Drtn,TT_FinMile,DT_FixedDrtn,RV_OK,TK_NotStart,A3600,Complete finishing works,,952,952,0,0,0,0,0,0,0,0,,,,2013-10-30 17:00,2013-10-30 17:00,,2013-06-13 17:00,2013-06-13 17:00,2013-06-13 17:00,2013-06-13 17:00,2013-06-13 17:00,2013-06-13 17:00,,2013-10-30 17:00,2013-10-30 17:00,,PT_Normal,,,,,UlqpV9wdDUSJKIuIgIEuVg,0ZDBVYfW8kONCqfTIwNHMg,,,N,0,0,,,2012-06-06 13:54,2012-06-06 13:54,admin,admin
216,138966,4412,21853,5284,1,0,N,N,N,CP_Drtn,TT_Task,DT_FixedDUR2,RV_OK,TK_NotStart,A3510,Corrugated sheets cladding,,952,0,200,0,0,0,200,0,0,0,,,,2013-05-18 08:00,2013-06-15 17:00,,2012-12-30 08:00,2013-01-27 17:00,2012-12-30 08:00,2013-01-27 17:00,2012-12-30 08:00,2013-01-27 17:00,,2013-05-18 08:00,2013-06-15 17:00,,PT_Normal,,,,,8F+j0nKNNEqktN767vqvGw,UXQQe3MWwUqDjdjnklxm7g,,,N,0,0,,,2012-06-06 13:54,2012-06-06 13:54,admin,admin
217,138967,4412,21840,5284,1,0,N,N,N,CP_Drtn,TT_Task,DT_FixedDUR2,RV_OK,TK_NotStart,A3640,Membrane Insulation for toilets,,3192,0,160,0,0,0,160,0,0,0,,,,2013-09-10 08:00,2013-10-02 17:00,,2012-06-02 08:00,2012-06-24 17:00,2012-06-02 08:00,2012-06-24 17:00,2012-06-02 08:00,2012-06-24 17:00,,2013-09-10 08:00,2013-10-02 17:00,,PT_Normal,,,,,2gUCg6P+vkaGZmEUbqGadQ,jjIDM5s/5UGy60F1YxYU/Q,,,N,0,0,,,2012-06-06 13:54,2012-06-06 13:54,admin,admin
218,138968,4412,21858,5284,1,0,N,N,N,CP_Drtn,TT_Task,DT_FixedDUR2,RV_OK,TK_NotStart,A3620,Insulation works for roof,,360,0,112,0,0,0,112,0,0,0,,,,2013-10-03 08:00,2013-10-19 17:00,,2013-08-12 08:00,2013-08-27 17:00,2013-08-12 08:00,2013-08-27 17:00,2013-08-12 08:00,2013-08-27 17:00,,2013-10-03 08:00,2013-10-19 17:00,,PT_Normal,,,,,bK6gy2vWyEWMz6XBVptJ0Q,MjEbytV+JUuCSFiV0jLhtw,,,N,0,0,,,2012-06-06 13:54,2012-06-06 13:54,admin,admin
219,138969,4412,21840,5284,1,0,N,N,N,CP_Drtn,TT_Task,DT_FixedDUR2,RV_OK,TK_NotStart,A3650,Internal Plaster works for wallls,,2616,0,400,0,0,0,400,0,0,0,,,,2013-06-18 08:00,2013-08-14 17:00,,2012-06-02 08:00,2012-07-29 17:00,2012-06-02 08:00,2012-07-29 17:00,2012-06-02 08:00,2012-07-29 17:00,,2013-06-18 08:00,2013-08-14 17:00,,PT_Normal,,,,,HI0yzeCTx0iJeU/yFj6NEg,M3WA9X2/nEO0+8zdCkcSvg,,,N,0,0,,,2012-06-06 13:54,2012-06-06 13:54,admin,admin
220,138970,4412,21840,5284,1,0,N,N,N,CP_Drtn,TT_Task,DT_FixedDUR2,RV_OK,TK_NotStart,A3660,External plaster Works (Dry Mix),,3256,2896,288,0,0,0,288,0,0,0,,,,2013-09-19 08:00,2013-10-30 17:00,,2012-06-02 08:00,2012-07-12 17:00,2012-06-02 08:00,2012-07-12 17:00,2012-06-02 08:00,2012-07-12 17:00,,2013-09-19 08:00,2013-10-30 17:00,,PT_Normal,,,,,QLE0vvhXkkWtsERHbKVIIw,UiOMgwd/jEyENQiWYFefXg,,,N,0,0,,,2012-06-06 13:54,2012-06-06 13:54,admin,admin
221,138971,4412,21840,5284,1,0,N,N,N,CP_Drtn,TT_Task,DT_FixedDUR2,RV_OK,TK_NotStart,A3710,Internal Paints for walls,,2616,0,168,0,0,0,168,0,0,0,,,,2013-08-15 08:00,2013-09-08 17:00,,2012-07-30 08:00,2012-08-22 17:00,2012-07-30 08:00,2012-08-22 17:00,2012-07-30 08:00,2012-08-22 17:00,,2013-08-15 08:00,2013-09-08 17:00,,PT_Normal,,,,,9lS9YPFnNECO2VozTHb81g,ZB0ZMo1bM02HVxje3tnLyA,,,N,0,0,,,2012-06-06 13:54,2012-06-06 13:54,admin,admin
222,138972,4412,21840,5284,1,0,N,N,N,CP_Drtn,TT_Task,DT_FixedDUR2,RV_OK,TK_NotStart,A3720,Suspend Ceiling works,,2616,0,128,0,0,0,128,0,0,0,,,,2013-08-15 08:00,2013-09-02 17:00,,2012-07-30 08:00,2012-08-16 17:00,2012-07-30 08:00,2012-08-16 17:00,2012-07-30 08:00,2012-08-16 17:00,,2013-08-15 08:00,2013-09-02 17:00,,PT_Normal,,,,,wyYNWQlAsEWnn6TEfXuCoQ,0Fk80yQAl02N5DaIH9qgSg,,,N,0,0,,,2012-06-06 13:54,2012-06-06 13:54,admin,admin
223,138973,4412,21840,5284,1,0,N,N,N,CP_Drtn,TT_Task,DT_FixedDUR2,RV_OK,TK_NotStart,A3680,Ceramic works for floors,,3192,0,64,0,0,0,64,0,0,0,,,,2013-10-03 08:00,2013-10-12 17:00,,2012-06-25 08:00,2012-07-03 17:00,2012-06-25 08:00,2012-07-03 17:00,2012-06-25 08:00,2012-07-03 17:00,,2013-10-03 08:00,2013-10-12 17:00,,PT_Normal,,,,,cZMHVxwSX0uMJo3nMdICLA,7cjGDH2A302eRTbOV/2hnA,,,N,0,0,,,2012-06-06 13:54,2012-06-06 13:54,admin,admin
224,138974,4412,21840,5284,1,0,N,N,N,CP_Drtn,TT_Task,DT_FixedDUR2,RV_OK,TK_NotStart,A3690,Ceramic works for walls,,3192,0,80,0,0,0,80,0,0,0,,,,2013-10-13 08:00,2013-10-23 17:00,,2012-07-04 08:00,2012-07-15 17:00,2012-07-04 08:00,2012-07-15 17:00,2012-07-04 08:00,2012-07-15 17:00,,2013-10-13 08:00,2013-10-23 17:00,,PT_Normal,,,,,d4DSJWlESk2eTUSLOmwbrg,P8znzG1uqEGmMUQzw2AM3g,,,N,0,0,,,2012-06-06 13:54,2012-06-06 13:54,admin,admin
225,138975,4412,21840,5284,1,0,N,N,N,CP_Drtn,TT_Task,DT_FixedDUR2,RV_OK,TK_NotStart,A3750,Epoxy paints for floors,,2616,0,120,0,0,0,120,0,0,0,,,,2013-09-09 08:00,2013-09-25 17:00,,2012-08-23 08:00,2012-09-09 17:00,2012-08-23 08:00,2012-09-09 17:00,2012-08-23 08:00,2012-09-09 17:00,,2013-09-09 08:00,2013-09-25 17:00,,PT_Normal,,,,,F8TS6B2PIEmRl/R6KrpR2Q,Za3r35sA6kmWh0cIUd8f9A,,,N,0,0,,,2012-06-06 13:54,2012-06-06 13:54,admin,admin
226,138976,4412,21840,5284,1,0,N,N,N,CP_Drtn,TT_Task,DT_FixedDUR2,RV_OK,TK_NotStart,A3780,Steel Doors,,2616,2256,240,0,0,0,240,0,0,0,,,,2013-09-26 08:00,2013-10-30 17:00,,2012-09-10 08:00,2012-10-14 17:00,2012-09-10 08:00,2012-10-14 17:00,2012-09-10 08:00,2012-10-14 17:00,,2013-09-26 08:00,2013-10-30 17:00,,PT_Normal,,,,,x2AUNSuCr0O4SJAKCy3pXg,0rHajqsV0kGDe3uh+TqT5A,,,N,0,0,,,2012-06-06 13:54,2012-06-06 13:54,admin,admin
227,138977,4412,21840,5284,1,0,N,N,N,CP_Drtn,TT_Task,DT_FixedDUR2,RV_OK,TK_NotStart,A3790,Timber Doors,,2760,2400,96,0,0,0,96,0,0,0,,,,2013-10-17 08:00,2013-10-30 17:00,,2012-09-10 08:00,2012-09-23 17:00,2012-09-10 08:00,2012-09-23 17:00,2012-09-10 08:00,2012-09-23 17:00,,2013-10-17 08:00,2013-10-30 17:00,,PT_Normal,,,,,0Avx/SBp40ahuO0BAPb4fg,GsuDLbRCNkybicteRvkIZQ,,,N,0,0,,,2012-06-06 13:54,2012-06-06 13:54,admin,admin
228,138978,4412,21840,5284,1,0,N,N,N,CP_Drtn,TT_Task,DT_FixedDUR2,RV_OK,TK_NotStart,A3700,Partition for Bathrooms,,3192,2832,48,0,0,0,48,0,0,0,,,,2013-10-24 08:00,2013-10-30 17:00,,2012-07-16 08:00,2012-07-22 17:00,2012-07-16 08:00,2012-07-22 17:00,2012-07-16 08:00,2012-07-22 17:00,,2013-10-24 08:00,2013-10-30 17:00,,PT_Normal,,,,,DE/MOCU1l0uRa3pKWySuNw,8SXPbyKVGkSKEruCI0MQGg,,,N,0,0,,,2012-06-06 13:54,2012-06-06 13:54,admin,admin
229,138979,4412,21840,5284,1,0,N,N,N,CP_Drtn,TT_Task,DT_FixedDUR2,RV_OK,TK_NotStart,A3730,Aluminum Windows,,2728,112,56,0,0,0,56,0,0,0,,,,2013-09-01 08:00,2013-09-08 17:00,,2012-07-30 08:00,2012-08-06 17:00,2012-07-30 08:00,2012-08-06 17:00,2012-07-30 08:00,2012-08-06 17:00,,2013-09-01 08:00,2013-09-08 17:00,,PT_Normal,,,,,7tN3m+ALfk6b74n2qN44YQ,DT75H7oLhkGn8Jf3+Tz0bQ,,,N,0,0,,,2012-06-06 13:54,2012-06-06 13:54,admin,admin
230,138980,4412,21858,5284,1,0,N,N,N,CP_Drtn,TT_Task,DT_FixedDUR2,RV_OK,TK_NotStart,A3630,Terrazo tiles for roofs,,360,0,80,0,0,0,80,0,0,0,,,,2013-10-20 08:00,2013-10-30 17:00,,2013-08-28 08:00,2013-09-08 17:00,2013-08-28 08:00,2013-09-08 17:00,2013-08-28 08:00,2013-09-08 17:00,,2013-10-20 08:00,2013-10-30 17:00,,PT_Normal,,,,,T3tNcnBnXE6XQP5kxRvpIg,S5QqcMFGaU6neW1Br6mc3Q,,,N,0,0,,,2012-06-06 13:54,2012-06-06 13:54,admin,admin
231,138981,4412,21840,5284,1,0,N,N,N,CP_Drtn,TT_Task,DT_FixedDUR2,RV_OK,TK_NotStart,A3740,Glass partitions for secaretary room,,2992,2632,24,0,0,0,24,0,0,0,,,,2013-10-28 08:00,2013-10-30 17:00,,2012-08-18 08:00,2012-08-20 17:00,2012-08-18 08:00,2012-08-20 17:00,2012-08-18 08:00,2012-08-20 17:00,,2013-10-28 08:00,2013-10-30 17:00,,PT_Normal,,,,,IvEdLLMzfEWcLifTzRe8ew,mzitnS3Zj0Gx8QXNF0E5hQ,,,N,0,0,,,2012-06-06 13:54,2012-06-06 13:54,admin,admin
232,138982,4412,21840,5284,1,0,N,N,N,CP_Drtn,TT_Task,DT_FixedDUR2,RV_OK,TK_NotStart,A3670,Marble for External Elevations walls,,3464,3104,80,0,0,0,80,0,0,0,,,,2013-10-20 08:00,2013-10-30 17:00,,2012-06-02 08:00,2012-06-12 17:00,2012-06-02 08:00,2012-06-12 17:00,2012-06-02 08:00,2012-06-12 17:00,,2013-10-20 08:00,2013-10-30 17:00,,PT_Normal,,,,,144V5VfZPkKOC2G0QF4p1g,w/VsvyTjoUOaX0wul4NFJA,,,N,0,0,,,2012-06-06 13:54,2012-06-06 13:54,admin,admin
233,138983,4412,21840,5284,1,0,N,N,N,CP_Drtn,TT_Task,DT_FixedDUR2,RV_OK,TK_NotStart,A3770,Metal Works (handrails),,2784,2424,96,0,0,0,96,0,0,0,,,,2013-10-17 08:00,2013-10-30 17:00,,2012-09-06 08:00,2012-09-19 17:00,2012-09-06 08:00,2012-09-19 17:00,2012-09-06 08:00,2012-09-19 17:00,,2013-10-17 08:00,2013-10-30 17:00,,PT_Normal,,,,,lxQbJZ6tC0iG/u63g29aZQ,C7E9jE6ikES3JzWY3/V95Q,,,N,0,0,,,2012-06-06 13:54,2012-06-06 13:54,admin,admin
234,138984,4412,21840,5284,0,0,N,N,N,CP_Drtn,TT_FinMile,DT_FixedDrtn,RV_OK,TK_NotStart,A3800,Complete finishing works,,360,360,0,0,0,0,0,0,0,0,,,,2013-10-30 17:00,2013-10-30 17:00,,2013-09-08 17:00,2013-09-08 17:00,2013-09-08 17:00,2013-09-08 17:00,2013-09-08 17:00,2013-09-08 17:00,,2013-10-30 17:00,2013-10-30 17:00,,PT_Normal,,,,,5qY4MdpHEUaVqoCrspbq6w,tsZrfqF1ekylBawMtEfN+A,,,N,0,0,,,2012-06-06 13:54,2012-06-06 13:54,admin,admin
235,138985,4412,21840,5284,1,0,N,N,N,CP_Drtn,TT_Task,DT_FixedDUR2,RV_OK,TK_NotStart,A3760,Marble for stairs,,2784,0,96,0,0,0,96,0,0,0,,,,2013-10-03 08:00,2013-10-16 17:00,,2012-08-23 08:00,2012-09-05 17:00,2012-08-23 08:00,2012-09-05 17:00,2012-08-23 08:00,2012-09-05 17:00,,2013-10-03 08:00,2013-10-16 17:00,,PT_Normal,,,,,Ej5i5jTK5k6sBPNRAMT6kw,k2N1seQsp0S2fVzIj3G59g,,,N,0,0,,,2012-06-06 13:54,2012-06-06 13:54,admin,admin
236,138986,4412,21863,5284,1,0,N,N,N,CP_Drtn,TT_Task,DT_FixedDUR2,RV_OK,TK_NotStart,A3810,Roof Parapet,,360,0,56,0,0,0,56,0,0,0,,,,2013-09-25 08:00,2013-10-02 17:00,,2013-08-04 08:00,2013-08-11 17:00,2013-08-04 08:00,2013-08-11 17:00,2013-08-04 08:00,2013-08-11 17:00,,2013-09-25 08:00,2013-10-02 17:00,,PT_Normal,,,,,VIXtkNGcTUSj/rainnR0lw,,,,N,0,0,,,2012-06-06 13:54,2012-06-06 13:54,admin,admin
237,138987,4412,21859,5284,1,0,N,N,N,CP_Drtn,TT_Task,DT_FixedDUR2,RV_OK,TK_NotStart,A3820,Masonry Works,,752,0,112,0,0,0,112,0,0,0,,,,2013-08-04 08:00,2013-08-19 17:00,,2013-04-16 08:00,2013-05-01 17:00,2013-04-16 08:00,2013-05-01 17:00,2013-04-16 08:00,2013-05-01 17:00,,2013-08-04 08:00,2013-08-19 17:00,,PT_Normal,,,,,94UbSiaXjE+IE5ujc2zkFA,,,,N,0,0,,,2012-06-06 13:54,2012-06-06 13:54,admin,admin
238,138988,4412,21859,5284,1,0,N,N,N,CP_Drtn,TT_Task,DT_FixedDUR2,RV_OK,TK_NotStart,A3870,Internal Plaster Works,,800,0,200,0,0,0,200,0,0,0,,,,2013-08-27 08:00,2013-09-24 17:00,,2013-05-02 08:00,2013-05-30 17:00,2013-05-02 08:00,2013-05-30 17:00,2013-05-02 08:00,2013-05-30 17:00,,2013-08-27 08:00,2013-09-24 17:00,,PT_Normal,,,,,qxh6m2ugAkG9cr6TDLhVmg,,,,N,0,0,,,2012-06-06 13:54,2012-06-06 13:54,admin,admin
239,138989,4412,21859,5284,1,0,N,N,N,CP_Drtn,TT_Task,DT_FixedDUR2,RV_OK,TK_NotStart,A3880,Insulation Works for floors,,752,0,48,0,0,0,48,0,0,0,,,,2013-08-20 08:00,2013-08-26 17:00,,2013-05-02 08:00,2013-05-08 17:00,2013-05-02 08:00,2013-05-08 17:00,2013-05-02 08:00,2013-05-08 17:00,,2013-08-20 08:00,2013-08-26 17:00,,PT_Normal,,,,,vBbrjtZLeEu8oG8G6HzoiA,,,,N,0,0,,,2012-06-06 13:54,2012-06-06 13:54,admin,admin
240,138990,4412,21859,5284,1,0,N,N,N,CP_Drtn,TT_Task,DT_FixedDUR2,RV_OK,TK_NotStart,A3890,"Floors Works( Ceramic, Marble)",,752,0,200,0,0,0,200,0,0,0,,,,2013-08-27 08:00,2013-09-24 17:00,,2013-05-09 08:00,2013-06-06 17:00,2013-05-09 08:00,2013-06-06 17:00,2013-05-09 08:00,2013-06-06 17:00,,2013-08-27 08:00,2013-09-24 17:00,,PT_Normal,,,,,m2JRQppkcU67SVH7S3+3lA,,,,N,0,0,,,2012-06-06 13:54,2012-06-06 13:54,admin,admin
241,138991,4412,21859,5284,1,0,N,N,N,CP_Drtn,TT_Task,DT_FixedDUR2,RV_OK,TK_NotStart,A3900,Stairs finishes,,840,0,80,0,0,0,80,0,0,0,,,,2013-10-08 08:00,2013-10-19 17:00,,2013-06-08 08:00,2013-06-18 17:00,2013-06-08 08:00,2013-06-18 17:00,2013-06-08 08:00,2013-06-18 17:00,,2013-10-08 08:00,2013-10-19 17:00,,PT_Normal,,,,,zbpVbfQQZUiLqsHMnfmt0g,,,,N,0,0,,,2012-06-06 13:54,2012-06-06 13:54,admin,admin
242,138992,4412,21859,5284,1,0,N,N,N,CP_Drtn,TT_Task,DT_FixedDUR2,RV_OK,TK_NotStart,A3910,Marble for Counters,,904,904,80,0,0,0,80,0,0,0,,,,2013-10-20 08:00,2013-10-30 17:00,,2013-06-10 08:00,2013-06-20 17:00,2013-06-10 08:00,2013-06-20 17:00,2013-06-10 08:00,2013-06-20 17:00,,2013-10-20 08:00,2013-10-30 17:00,,PT_Normal,,,,,9RFvl2UNlEym8cJAgJdS3g,,,,N,0,0,,,2012-06-06 13:54,2012-06-06 13:54,admin,admin
243,138993,4412,21859,5284,1,0,N,N,N,CP_Drtn,TT_Task,DT_FixedDUR2,RV_OK,TK_NotStart,A3920,Suspend Ceilings works,,1064,312,96,0,0,0,96,0,0,0,,,,2013-10-05 08:00,2013-10-17 17:00,,2013-05-02 08:00,2013-05-15 17:00,2013-05-02 08:00,2013-05-15 17:00,2013-05-02 08:00,2013-05-15 17:00,,2013-10-05 08:00,2013-10-17 17:00,,PT_Normal,,,,,At1w8vwiMU+F4JwSK82FvQ,,,,N,0,0,,,2012-06-06 13:54,2012-06-06 13:54,admin,admin
244,138994,4412,21859,5284,1,0,N,N,N,CP_Drtn,TT_Task,DT_FixedDUR2,RV_OK,TK_NotStart,A3930,Paints Works,,752,0,200,0,0,0,200,0,0,0,,,,2013-09-25 08:00,2013-10-23 17:00,,2013-06-08 08:00,2013-07-06 17:00,2013-06-08 08:00,2013-07-06 17:00,2013-06-08 08:00,2013-07-06 17:00,,2013-09-25 08:00,2013-10-23 17:00,,PT_Normal,,,,,xhDdtmCdyEih4ZjqfwMalQ,,,,N,0,0,,,2012-06-06 13:54,2012-06-06 13:54,admin,admin
245,138995,4412,21859,5284,1,0,N,N,N,CP_Drtn,TT_Task,DT_FixedDUR2,RV_OK,TK_NotStart,A3940,"Doors Works ( Glass, Wood)",,976,976,128,0,0,0,128,0,0,0,,,,2013-10-13 08:00,2013-10-30 17:00,,2013-05-23 08:00,2013-06-10 17:00,2013-05-23 08:00,2013-06-10 17:00,2013-05-23 08:00,2013-06-10 17:00,,2013-10-13 08:00,2013-10-30 17:00,,PT_Normal,,,,,wLAx8+q3t0iE9xzlsjm4rQ,,,,N,0,0,,,2012-06-06 13:54,2012-06-06 13:54,admin,admin
246,138996,4412,21859,5284,1,0,N,N,N,CP_Drtn,TT_Task,DT_FixedDUR2,RV_OK,TK_NotStart,A3950,Windows Works,,1152,176,96,0,0,0,96,0,0,0,,,,2013-10-17 08:00,2013-10-30 17:00,,2013-05-02 08:00,2013-05-15 17:00,2013-05-02 08:00,2013-05-15 17:00,2013-05-02 08:00,2013-05-15 17:00,,2013-10-17 08:00,2013-10-30 17:00,,PT_Normal,,,,,c05jhceAt0edUx7wi0t/+w,,,,N,0,0,,,2012-06-06 13:54,2012-06-06 13:54,admin,admin
247,138997,4412,21859,5284,1,0,N,N,N,CP_Drtn,TT_Task,DT_FixedDUR2,RV_OK,TK_NotStart,A3960,HDF floors,,752,752,48,0,0,0,48,0,0,0,,,,2013-10-24 08:00,2013-10-30 17:00,,2013-07-07 08:00,2013-07-13 17:00,2013-07-07 08:00,2013-07-13 17:00,2013-07-07 08:00,2013-07-13 17:00,,2013-10-24 08:00,2013-10-30 17:00,,PT_Normal,,,,,ruVKpqiNoUu9F3jteji6sA,,,,N,0,0,,,2012-06-06 13:54,2012-06-06 13:54,admin,admin
248,138998,4412,21855,5284,1,0,N,N,N,CP_Drtn,TT_Task,DT_FixedDUR2,RV_OK,TK_NotStart,A3980,Masonry Works,,480,0,112,0,0,0,112,0,0,0,,,,2013-08-04 08:00,2013-08-19 17:00,,2013-05-26 08:00,2013-06-10 17:00,2013-05-26 08:00,2013-06-10 17:00,2013-05-26 08:00,2013-06-10 17:00,,2013-08-04 08:00,2013-08-19 17:00,,PT_Normal,,,,,kbjHQxZ4S0271ixgMpp7ug,mFnOl+FKaEO1jA3MF0odvQ,,,N,0,0,,,2012-06-06 13:54,2012-06-06 13:54,admin,admin
249,138999,4412,21855,5284,1,0,N,N,N,CP_Drtn,TT_Task,DT_FixedDUR2,RV_OK,TK_NotStart,A3990,Internal Plaster Works,,528,0,200,0,0,0,200,0,0,0,,,,2013-08-27 08:00,2013-09-24 17:00,,2013-06-11 08:00,2013-07-09 17:00,2013-06-11 08:00,2013-07-09 17:00,2013-06-11 08:00,2013-07-09 17:00,,2013-08-27 08:00,2013-09-24 17:00,,PT_Normal,,,,,kvE5+XWrC0SK/+hFs+r1DQ,7GvDXEk3RkmcnYDP9ms9Yw,,,N,0,0,,,2012-06-06 13:54,2012-06-06 13:54,admin,admin
250,139000,4412,21855,5284,1,0,N,N,N,CP_Drtn,TT_Task,DT_FixedDUR2,RV_OK,TK_NotStart,A4000,Insulation Works for floors,,480,0,48,0,0,0,48,0,0,0,,,,2013-08-20 08:00,2013-08-26 17:00,,2013-06-11 08:00,2013-06-17 17:00,2013-06-11 08:00,2013-06-17 17:00,2013-06-11 08:00,2013-06-17 17:00,,2013-08-20 08:00,2013-08-26 17:00,,PT_Normal,,,,,BDBpf3tb/kWJoJZhkg/PGg,yi+WN9WQeEOPjCMxJayvfQ,,,N,0,0,,,2012-06-06 13:54,2012-06-06 13:54,admin,admin
251,139001,4412,21855,5284,1,0,N,N,N,CP_Drtn,TT_Task,DT_FixedDUR2,RV_OK,TK_NotStart,A4020,"Floors Works( Ceramic, Marble)",,480,0,200,0,0,0,200,0,0,0,,,,2013-08-27 08:00,2013-09-24 17:00,,2013-06-18 08:00,2013-07-16 17:00,2013-06-18 08:00,2013-07-16 17:00,2013-06-18 08:00,2013-07-16 17:00,,2013-08-27 08:00,2013-09-24 17:00,,PT_Normal,,,,,gQIksIuFjEGIJgyJaBTOkQ,W3D8moWSvEOFcsl4IMmvPQ,,,N,0,0,,,2012-06-06 13:54,2012-06-06 13:54,admin,admin
252,139002,4412,21855,5284,1,0,N,N,N,CP_Drtn,TT_Task,DT_FixedDUR2,RV_OK,TK_NotStart,A4040,Stairs finishes,,568,0,80,0,0,0,80,0,0,0,,,,2013-10-08 08:00,2013-10-19 17:00,,2013-07-17 08:00,2013-07-28 17:00,2013-07-17 08:00,2013-07-28 17:00,2013-07-17 08:00,2013-07-28 17:00,,2013-10-08 08:00,2013-10-19 17:00,,PT_Normal,,,,,gyYuY7F96kWXWxlHhNgdMg,18DFArP05kqqEF/NdhJrcA,,,N,0,0,,,2012-06-06 13:54,2012-06-06 13:54,admin,admin
253,139003,4412,21855,5284,1,0,N,N,N,CP_Drtn,TT_Task,DT_FixedDUR2,RV_OK,TK_NotStart,A4060,Marble for Counters,,632,632,80,0,0,0,80,0,0,0,,,,2013-10-20 08:00,2013-10-30 17:00,,2013-07-20 08:00,2013-07-30 17:00,2013-07-20 08:00,2013-07-30 17:00,2013-07-20 08:00,2013-07-30 17:00,,2013-10-20 08:00,2013-10-30 17:00,,PT_Normal,,,,,CCL0ROK6FU+2i50UK/gnCA,E3vjOuverUeXNwtUHnCNgg,,,N,0,0,,,2012-06-06 13:54,2012-06-06 13:54,admin,admin
254,139004,4412,21855,5284,1,0,N,N,N,CP_Drtn,TT_Task,DT_FixedDUR2,RV_OK,TK_NotStart,A3970,Suspend Ceilings works,,792,312,96,0,0,0,96,0,0,0,,,,2013-10-05 08:00,2013-10-17 17:00,,2013-06-11 08:00,2013-06-24 17:00,2013-06-11 08:00,2013-06-24 17:00,2013-06-11 08:00,2013-06-24 17:00,,2013-10-05 08:00,2013-10-17 17:00,,PT_Normal,,,,,mSwb3dgM0keaAHm6zFfDHQ,OHwX+0k7qUuNJyzHomIu1Q,,,N,0,0,,,2012-06-06 13:54,2012-06-06 13:54,admin,admin
255,139005,4412,21855,5284,1,0,N,N,N,CP_Drtn,TT_Task,DT_FixedDUR2,RV_OK,TK_NotStart,A4050,Paints Works,,480,0,200,0,0,0,200,0,0,0,,,,2013-09-25 08:00,2013-10-23 17:00,,2013-07-17 08:00,2013-08-14 17:00,2013-07-17 08:00,2013-08-14 17:00,2013-07-17 08:00,2013-08-14 17:00,,2013-09-25 08:00,2013-10-23 17:00,,PT_Normal,,,,,5eLl/lXb8kiuEzUUE7q18g,LXuj36M1fEiVX+VXKDTv+g,,,N,0,0,,,2012-06-06 13:54,2012-06-06 13:54,admin,admin
256,139006,4412,21855,5284,1,0,N,N,N,CP_Drtn,TT_Task,DT_FixedDUR2,RV_OK,TK_NotStart,A4030,"Doors Works ( Glass, Wood)",,704,704,128,0,0,0,128,0,0,0,,,,2013-10-13 08:00,2013-10-30 17:00,,2013-07-02 08:00,2013-07-20 17:00,2013-07-02 08:00,2013-07-20 17:00,2013-07-02 08:00,2013-07-20 17:00,,2013-10-13 08:00,2013-10-30 17:00,,PT_Normal,,,,,yivJWjlMIUSfDxxXc1F3lg,A/Yib5H2v0yO5QBNq2yPfw,,,N,0,0,,,2012-06-06 13:54,2012-06-06 13:54,admin,admin
257,139007,4412,21855,5284,1,0,N,N,N,CP_Drtn,TT_Task,DT_FixedDUR2,RV_OK,TK_NotStart,A4010,Windows Works,,880,176,96,0,0,0,96,0,0,0,,,,2013-10-17 08:00,2013-10-30 17:00,,2013-06-11 08:00,2013-06-24 17:00,2013-06-11 08:00,2013-06-24 17:00,2013-06-11 08:00,2013-06-24 17:00,,2013-10-17 08:00,2013-10-30 17:00,,PT_Normal,,,,,j7LeqLGf3k+1DTGNIEbcXw,vrnMk+TTfEqN1dwVHwT4UA,,,N,0,0,,,2012-06-06 13:54,2012-06-06 13:54,admin,admin
258,139008,4412,21855,5284,1,0,N,N,N,CP_Drtn,TT_Task,DT_FixedDUR2,RV_OK,TK_NotStart,A4070,HDF floors,,480,480,48,0,0,0,48,0,0,0,,,,2013-10-24 08:00,2013-10-30 17:00,,2013-08-15 08:00,2013-08-21 17:00,2013-08-15 08:00,2013-08-21 17:00,2013-08-15 08:00,2013-08-21 17:00,,2013-10-24 08:00,2013-10-30 17:00,,PT_Normal,,,,,08GjdELWdkiUp2EfvKxbNA,g6AmyyjloU+nK+17+Va3Jw,,,N,0,0,,,2012-06-06 13:54,2012-06-06 13:54,admin,admin
259,139009,4412,21859,5284,1,0,N,N,N,CP_Drtn,TT_Task,DT_FixedDUR2,RV_OK,TK_NotStart,A4080,Metal Works,,840,840,80,0,0,0,80,0,0,0,,,,2013-10-20 08:00,2013-10-30 17:00,,2013-06-19 08:00,2013-06-30 17:00,2013-06-19 08:00,2013-06-30 17:00,2013-06-19 08:00,2013-06-30 17:00,,2013-10-20 08:00,2013-10-30 17:00,,PT_Normal,,,,,HNWnGRWA+EyEeQjZ4m+dpw,,,,N,0,0,,,2012-06-06 13:54,2012-06-06 13:54,admin,admin
260,139010,4412,21821,5284,1,0,N,N,N,CP_Drtn,TT_Task,DT_FixedDUR2,RV_OK,TK_NotStart,QA3,The 1st Internal Quality Audit on site,,2840,2840,24,0,0,0,24,0,0,0,,,,2013-10-28 08:00,2013-10-30 17:00,,2012-09-09 08:00,2012-09-11 17:00,2012-09-09 08:00,2012-09-11 17:00,2012-09-09 08:00,2012-09-11 17:00,,2013-10-28 08:00,2013-10-30 17:00,,PT_Normal,,,,,p77HgLNUnU+GPWnDhiQqeA,,,,N,0,0,,,2012-06-06 13:54,2012-06-06 13:54,admin,admin
261,139011,4412,21821,5284,1,0,N,N,N,CP_Drtn,TT_Task,DT_FixedDUR2,RV_OK,TK_NotStart,QA8,The 2nd Internal Quality Audit on site,,1960,1960,40,0,0,0,40,0,0,0,,,,2013-10-26 08:00,2013-10-30 17:00,,2013-01-13 08:00,2013-01-17 17:00,2013-01-13 08:00,2013-01-17 17:00,2013-01-13 08:00,2013-01-17 17:00,,2013-10-26 08:00,2013-10-30 17:00,,PT_Normal,,,,,tgyBg/ASt0a0oFTmfh8i7Q,,,,N,0,0,,,2012-06-06 13:54,2012-06-06 13:54,admin,admin
262,139012,4412,21821,5284,1,0,N,N,N,CP_Drtn,TT_Task,DT_FixedDUR2,RV_OK,TK_NotStart,QA13,The 3rd Internal Quality Audit on site,,704,704,64,0,0,0,64,0,0,0,,,,2013-10-22 08:00,2013-10-30 17:00,,2013-07-11 08:00,2013-07-20 17:00,2013-07-11 08:00,2013-07-20 17:00,2013-07-11 08:00,2013-07-20 17:00,,2013-10-22 08:00,2013-10-30 17:00,,PT_Normal,,,,,Dh503SINTUqJfc2sI61VpA,,,,N,0,0,,,2012-06-06 13:54,2012-06-06 13:54,admin,admin
263,139013,4412,21855,5284,1,0,N,N,N,CP_Drtn,TT_Task,DT_FixedDUR2,RV_OK,TK_NotStart,A4090,Metal Works,,568,568,80,0,0,0,80,0,0,0,,,,2013-10-20 08:00,2013-10-30 17:00,,2013-07-29 08:00,2013-08-08 17:00,2013-07-29 08:00,2013-08-08 17:00,2013-07-29 08:00,2013-08-08 17:00,,2013-10-20 08:00,2013-10-30 17:00,,PT_Normal,,,,,3J9sBNL58U26x4Vp1ymJxw,,,,N,0,0,,,2012-06-06 13:54,2012-06-06 13:54,admin,admin
264,139014,4412,21856,5284,1,0,N,N,N,CP_Drtn,TT_Task,DT_FixedDUR2,RV_OK,TK_NotStart,A4100,Masonry Works,,224,0,112,0,0,0,112,0,0,0,,,,2013-08-04 08:00,2013-08-19 17:00,,2013-07-02 08:00,2013-07-17 17:00,2013-07-02 08:00,2013-07-17 17:00,2013-07-02 08:00,2013-07-17 17:00,,2013-08-04 08:00,2013-08-19 17:00,,PT_Normal,,,,,nxaUDsbXQ06IPiVcL/UVGA,nIragGakc0qlaY/kJ9rT/g,,,N,0,0,,,2012-06-06 13:54,2012-06-06 13:54,admin,admin
265,139015,4412,21856,5284,1,0,N,N,N,CP_Drtn,TT_Task,DT_FixedDUR2,RV_OK,TK_NotStart,A4110,Internal Plaster Works,,272,0,200,0,0,0,200,0,0,0,,,,2013-08-27 08:00,2013-09-24 17:00,,2013-07-18 08:00,2013-08-15 17:00,2013-07-18 08:00,2013-08-15 17:00,2013-07-18 08:00,2013-08-15 17:00,,2013-08-27 08:00,2013-09-24 17:00,,PT_Normal,,,,,nkcY5wADxEqgLHqK7VGZdw,IFCKJ55C90KL1Nbe7JJzhw,,,N,0,0,,,2012-06-06 13:54,2012-06-06 13:54,admin,admin
266,139016,4412,21856,5284,1,0,N,N,N,CP_Drtn,TT_Task,DT_FixedDUR2,RV_OK,TK_NotStart,A4120,Insulation Works for floors,,224,0,48,0,0,0,48,0,0,0,,,,2013-08-20 08:00,2013-08-26 17:00,,2013-07-18 08:00,2013-07-24 17:00,2013-07-18 08:00,2013-07-24 17:00,2013-07-18 08:00,2013-07-24 17:00,,2013-08-20 08:00,2013-08-26 17:00,,PT_Normal,,,,,us0/agH5F0O5H1oRkHW08A,VsxPRyU+1UiNJKtov1xqrg,,,N,0,0,,,2012-06-06 13:54,2012-06-06 13:54,admin,admin
267,139017,4412,21856,5284,1,0,N,N,N,CP_Drtn,TT_Task,DT_FixedDUR2,RV_OK,TK_NotStart,A4150,"Floors Works( Ceramic, Marble)",,224,0,200,0,0,0,200,0,0,0,,,,2013-08-27 08:00,2013-09-24 17:00,,2013-07-25 08:00,2013-08-22 17:00,2013-07-25 08:00,2013-08-22 17:00,2013-07-25 08:00,2013-08-22 17:00,,2013-08-27 08:00,2013-09-24 17:00,,PT_Normal,,,,,BcI6SOTVHkSqmaxAFYsH5w,uOGO37Kg8UucM3HWvXMlsg,,,N,0,0,,,2012-06-06 13:54,2012-06-06 13:54,admin,admin
268,139018,4412,21856,5284,1,0,N,N,N,CP_Drtn,TT_Task,DT_FixedDUR2,RV_OK,TK_NotStart,A4170,Stairs finishes,,312,0,80,0,0,0,80,0,0,0,,,,2013-10-08 08:00,2013-10-19 17:00,,2013-08-24 08:00,2013-09-03 17:00,2013-08-24 08:00,2013-09-03 17:00,2013-08-24 08:00,2013-09-03 17:00,,2013-10-08 08:00,2013-10-19 17:00,,PT_Normal,,,,,1Ab32G1mf0mleTdhGXvwTg,OCoETcI8oUqX4Xxp8EVmZA,,,N,0,0,,,2012-06-06 13:54,2012-06-06 13:54,admin,admin
269,139019,4412,21856,5284,1,0,N,N,N,CP_Drtn,TT_Task,DT_FixedDUR2,RV_OK,TK_NotStart,A4190,Marble for Counters,,376,376,80,0,0,0,80,0,0,0,,,,2013-10-20 08:00,2013-10-30 17:00,,2013-08-26 08:00,2013-09-05 17:00,2013-08-26 08:00,2013-09-05 17:00,2013-08-26 08:00,2013-09-05 17:00,,2013-10-20 08:00,2013-10-30 17:00,,PT_Normal,,,,,5nM4UF72pU2h3eN9EIXNVg,prwJHcnN4UqOjR2k6FDB+Q,,,N,0,0,,,2012-06-06 13:54,2012-06-06 13:54,admin,admin
270,139020,4412,21856,5284,1,0,N,N,N,CP_Drtn,TT_Task,DT_FixedDUR2,RV_OK,TK_NotStart,A4130,Suspend Ceilings works,,536,312,96,0,0,0,96,0,0,0,,,,2013-10-05 08:00,2013-10-17 17:00,,2013-07-18 08:00,2013-07-31 17:00,2013-07-18 08:00,2013-07-31 17:00,2013-07-18 08:00,2013-07-31 17:00,,2013-10-05 08:00,2013-10-17 17:00,,PT_Normal,,,,,ysQ8Zy726ky2PNru4OL4Hg,eBFXyOkc6UC7juFQHz0CWQ,,,N,0,0,,,2012-06-06 13:54,2012-06-06 13:54,admin,admin
271,139021,4412,21856,5284,1,0,N,N,N,CP_Drtn,TT_Task,DT_FixedDUR2,RV_OK,TK_NotStart,A4180,Paints Works,,224,0,200,0,0,0,200,0,0,0,,,,2013-09-25 08:00,2013-10-23 17:00,,2013-08-24 08:00,2013-09-21 17:00,2013-08-24 08:00,2013-09-21 17:00,2013-08-24 08:00,2013-09-21 17:00,,2013-09-25 08:00,2013-10-23 17:00,,PT_Normal,,,,,3yJfO5wdZ0e5gZkJEoDCmA,kx5YJqVhK0OjVqvn8B3seA,,,N,0,0,,,2012-06-06 13:54,2012-06-06 13:54,admin,admin
272,139022,4412,21856,5284,1,0,N,N,N,CP_Drtn,TT_Task,DT_FixedDUR2,RV_OK,TK_NotStart,A4160,"Doors Works ( Glass, Wood)",,448,448,128,0,0,0,128,0,0,0,,,,2013-10-13 08:00,2013-10-30 17:00,,2013-08-08 08:00,2013-08-26 17:00,2013-08-08 08:00,2013-08-26 17:00,2013-08-08 08:00,2013-08-26 17:00,,2013-10-13 08:00,2013-10-30 17:00,,PT_Normal,,,,,dhBRJJ1HP0aW13URXAvrow,22RQ/3TI+kugSoIl0L1Bcw,,,N,0,0,,,2012-06-06 13:54,2012-06-06 13:54,admin,admin
273,139023,4412,21856,5284,1,0,N,N,N,CP_Drtn,TT_Task,DT_FixedDUR2,RV_OK,TK_NotStart,A4140,Windows Works,,624,176,96,0,0,0,96,0,0,0,,,,2013-10-17 08:00,2013-10-30 17:00,,2013-07-18 08:00,2013-07-31 17:00,2013-07-18 08:00,2013-07-31 17:00,2013-07-18 08:00,2013-07-31 17:00,,2013-10-17 08:00,2013-10-30 17:00,,PT_Normal,,,,,pmhZosJgBkyP7s7mL533DA,FRmlgmi2a0uNahtBU8DsGw,,,N,0,0,,,2012-06-06 13:54,2012-06-06 13:54,admin,admin
274,139024,4412,21856,5284,1,0,N,N,N,CP_Drtn,TT_Task,DT_FixedDUR2,RV_OK,TK_NotStart,A4210,HDF floors,,224,224,48,0,0,0,48,0,0,0,,,,2013-10-24 08:00,2013-10-30 17:00,,2013-09-22 08:00,2013-09-28 17:00,2013-09-22 08:00,2013-09-28 17:00,2013-09-22 08:00,2013-09-28 17:00,,2013-10-24 08:00,2013-10-30 17:00,,PT_Normal,,,,,oYq+zAdzBEGPOPFZ6J3oIQ,I2MUuLqAgE6XZSgu230WCQ,,,N,0,0,,,2012-06-06 13:54,2012-06-06 13:54,admin,admin
275,139025,4412,21856,5284,1,0,N,N,N,CP_Drtn,TT_Task,DT_FixedDUR2,RV_OK,TK_NotStart,A4200,Metal Works,,312,312,80,0,0,0,80,0,0,0,,,,2013-10-20 08:00,2013-10-30 17:00,,2013-09-04 08:00,2013-09-15 17:00,2013-09-04 08:00,2013-09-15 17:00,2013-09-04 08:00,2013-09-15 17:00,,2013-10-20 08:00,2013-10-30 17:00,,PT_Normal,,,,,K+oUqufo9kOWkhhYf0WfDQ,/Pvd06uy4UqrjRZuIdMukQ,,,N,0,0,,,2012-06-06 13:54,2012-06-06 13:54,admin,admin
276,139026,4412,21857,5284,1,0,N,N,N,CP_Drtn,TT_Task,DT_FixedDUR2,RV_OK,TK_NotStart,A4220,Masonry Works,,0,0,112,0,0,0,112,0,0,0,,,,2013-08-04 08:00,2013-08-19 17:00,,2013-08-04 08:00,2013-08-19 17:00,2013-08-04 08:00,2013-08-19 17:00,2013-08-04 08:00,2013-08-19 17:00,,2013-08-04 08:00,2013-08-19 17:00,,PT_Normal,,,,,124trJFf/EmD3BMaQigHBg,G7ts14uEiEmZjgwnBNHsMQ,,,Y,0,0,,,2012-06-06 13:54,2012-06-06 13:54,admin,admin
277,139027,4412,21857,5284,1,0,N,N,N,CP_Drtn,TT_Task,DT_FixedDUR2,RV_OK,TK_NotStart,A4230,Internal Plaster Works,,48,0,200,0,0,0,200,0,0,0,,,,2013-08-27 08:00,2013-09-24 17:00,,2013-08-20 08:00,2013-09-17 17:00,2013-08-20 08:00,2013-09-17 17:00,2013-08-20 08:00,2013-09-17 17:00,,2013-08-27 08:00,2013-09-24 17:00,,PT_Normal,,,,,VjNZ6WJ/v024CyQBaoU8WA,iG4Hh5IlxUOM6r/FxSHPgA,,,N,0,0,,,2012-06-06 13:54,2012-06-06 13:54,admin,admin
278,139028,4412,21857,5284,1,0,N,N,N,CP_Drtn,TT_Task,DT_FixedDUR2,RV_OK,TK_NotStart,A4240,Insulation Works for floors,,0,0,48,0,0,0,48,0,0,0,,,,2013-08-20 08:00,2013-08-26 17:00,,2013-08-20 08:00,2013-08-26 17:00,2013-08-20 08:00,2013-08-26 17:00,2013-08-20 08:00,2013-08-26 17:00,,2013-08-20 08:00,2013-08-26 17:00,,PT_Normal,,,,,QUcNsfJ7AkKiXFDoFKKNmQ,WG3jbl94ckOXEwYYcJxgCQ,,,Y,0,0,,,2012-06-06 13:54,2012-06-06 13:54,admin,admin
279,139029,4412,21857,5284,1,0,N,N,N,CP_Drtn,TT_Task,DT_FixedDUR2,RV_OK,TK_NotStart,A4270,"Floors Works( Ceramic, Marble)",,0,0,200,0,0,0,200,0,0,0,,,,2013-08-27 08:00,2013-09-24 17:00,,2013-08-27 08:00,2013-09-24 17:00,2013-08-27 08:00,2013-09-24 17:00,2013-08-27 08:00,2013-09-24 17:00,,2013-08-27 08:00,2013-09-24 17:00,,PT_Normal,,,,,uJhSf5YGo0ep48WGmBhRiw,3V90jMq4HUuLqmnfjODH4Q,,,Y,0,0,,,2012-06-06 13:54,2012-06-06 13:54,admin,admin
280,139030,4412,21857,5284,1,0,N,N,N,CP_Drtn,TT_Task,DT_FixedDUR2,RV_OK,TK_NotStart,A4290,Stairs finishes,,88,0,80,0,0,0,80,0,0,0,,,,2013-10-08 08:00,2013-10-19 17:00,,2013-09-25 08:00,2013-10-06 17:00,2013-09-25 08:00,2013-10-06 17:00,2013-09-25 08:00,2013-10-06 17:00,,2013-10-08 08:00,2013-10-19 17:00,,PT_Normal,,,,,U7OAqrXmMkiKjzr2g9nnHA,N2FRuqB4EUK205yRJFaevA,,,N,0,0,,,2012-06-06 13:54,2012-06-06 13:54,admin,admin
281,139031,4412,21857,5284,1,0,N,N,N,CP_Drtn,TT_Task,DT_FixedDUR2,RV_OK,TK_NotStart,A4310,Marble for Counters,,152,152,80,0,0,0,80,0,0,0,,,,2013-10-20 08:00,2013-10-30 17:00,,2013-09-28 08:00,2013-10-08 17:00,2013-09-28 08:00,2013-10-08 17:00,2013-09-28 08:00,2013-10-08 17:00,,2013-10-20 08:00,2013-10-30 17:00,,PT_Normal,,,,,2Q4ktn8vmUenAWSrs+iGrw,9D7Jb5z94UelWunRH8nGug,,,N,0,0,,,2012-06-06 13:54,2012-06-06 13:54,admin,admin
282,139032,4412,21857,5284,1,0,N,N,N,CP_Drtn,TT_Task,DT_FixedDUR2,RV_OK,TK_NotStart,A4250,Suspend Ceilings works,,312,312,96,0,0,0,96,0,0,0,,,,2013-10-05 08:00,2013-10-17 17:00,,2013-08-20 08:00,2013-09-02 17:00,2013-08-20 08:00,2013-09-02 17:00,2013-08-20 08:00,2013-09-02 17:00,,2013-10-05 08:00,2013-10-17 17:00,,PT_Normal,,,,,LVSy8eQtn0WYve01uWXm6Q,DQPA9rZ8e0CMqywJCCt0Pg,,,N,0,0,,,2012-06-06 13:54,2012-06-06 13:54,admin,admin
283,139033,4412,21857,5284,1,0,N,N,N,CP_Drtn,TT_Task,DT_FixedDUR2,RV_OK,TK_NotStart,A4300,Paints Works,,0,0,200,0,0,0,200,0,0,0,,,,2013-09-25 08:00,2013-10-23 17:00,,2013-09-25 08:00,2013-10-23 17:00,2013-09-25 08:00,2013-10-23 17:00,2013-09-25 08:00,2013-10-23 17:00,,2013-09-25 08:00,2013-10-23 17:00,,PT_Normal,,,,,af/Gge4jgUSvjMLlBn0Ycw,30dynrKYYkSQsh/bzWSt1Q,,,Y,0,0,,,2012-06-06 13:54,2012-06-06 13:54,admin,admin
284,139034,4412,21857,5284,1,0,N,N,N,CP_Drtn,TT_Task,DT_FixedDUR2,RV_OK,TK_NotStart,A4280,"Doors Works ( Glass, Wood)",,224,224,128,0,0,0,128,0,0,0,,,,2013-10-13 08:00,2013-10-30 17:00,,2013-09-10 08:00,2013-09-28 17:00,2013-09-10 08:00,2013-09-28 17:00,2013-09-10 08:00,2013-09-28 17:00,,2013-10-13 08:00,2013-10-30 17:00,,PT_Normal,,,,,DdbhFag1nU6eseSagDpw2g,d3bdJCcTI0qmeCeO7/2KNA,,,N,0,0,,,2012-06-06 13:54,2012-06-06 13:54,admin,admin
285,139035,4412,21857,5284,1,0,N,N,N,CP_Drtn,TT_Task,DT_FixedDUR2,RV_OK,TK_NotStart,A4260,Windows Works,,400,176,96,0,0,0,96,0,0,0,,,,2013-10-17 08:00,2013-10-30 17:00,,2013-08-20 08:00,2013-09-02 17:00,2013-08-20 08:00,2013-09-02 17:00,2013-08-20 08:00,2013-09-02 17:00,,2013-10-17 08:00,2013-10-30 17:00,,PT_Normal,,,,,EMHNG4PwK0yYGejlRgtFnA,QRNzQ4CmaU+vWSj1YuJvUA,,,N,0,0,,,2012-06-06 13:54,2012-06-06 13:54,admin,admin
286,139036,4412,21857,5284,1,0,N,N,N,CP_Drtn,TT_Task,DT_FixedDUR2,RV_OK,TK_NotStart,A4330,HDF floors,,0,0,48,0,0,0,48,0,0,0,,,,2013-10-24 08:00,2013-10-30 17:00,,2013-10-24 08:00,2013-10-30 17:00,2013-10-24 08:00,2013-10-30 17:00,2013-10-24 08:00,2013-10-30 17:00,,2013-10-24 08:00,2013-10-30 17:00,,PT_Normal,,,,,i58gtoJl6Ey+NPsnk+w2pA,FxWLw5rmoUig0vmTXA5HqA,,,Y,0,0,,,2012-06-06 13:54,2012-06-06 13:54,admin,admin
287,139037,4412,21857,5284,1,0,N,N,N,CP_Drtn,TT_Task,DT_FixedDUR2,RV_OK,TK_NotStart,A4320,Metal Works,,88,88,80,0,0,0,80,0,0,0,,,,2013-10-20 08:00,2013-10-30 17:00,,2013-10-07 08:00,2013-10-17 17:00,2013-10-07 08:00,2013-10-17 17:00,2013-10-07 08:00,2013-10-17 17:00,,2013-10-20 08:00,2013-10-30 17:00,,PT_Normal,,,,,sQOzyVfNUUiWMZVJvpzTzg,1Fkcibo3A0u5ZRLqhOjA7Q,,,N,0,0,,,2012-06-06 13:54,2012-06-06 13:54,admin,admin
288,139038,4412,21858,5284,1,0,N,N,N,CP_Drtn,TT_Task,DT_FixedDUR2,RV_OK,TK_NotStart,A4340,New Activity,,,,8,0,0,0,8,0,0,0,,,,,,,,,2012-06-02 08:00,2012-06-02 17:00,2012-06-02 08:00,2012-06-02 17:00,,,,,PT_Normal,,,,,3jNyVPbBnEydUP1QvB/1CA,,,,N,0,0,,,2012-06-06 13:54,2012-06-06 13:54,admin,admin
