,task_id,proj_id,wbs_id,clndr_id,est_wt,phys_complete_pct,rev_fdbk_flag,lock_plan_flag,auto_compute_act_flag,complete_pct_type,task_type,duration_type,review_type,status_code,task_code,task_name,rsrc_id,total_float_hr_cnt,free_float_hr_cnt,remain_drtn_hr_cnt,act_work_qty,remain_work_qty,target_work_qty,target_drtn_hr_cnt,target_equip_qty,act_equip_qty,remain_equip_qty,cstr_date,act_start_date,act_end_date,late_start_date,late_end_date,expect_end_date,early_start_date,early_end_date,restart_date,reend_date,target_start_date,target_end_date,review_end_date,rem_late_start_date,rem_late_end_date,cstr_type,priority_type,suspend_date,resume_date,float_path,float_path_order,guid,tmpl_guid,cstr_date2,cstr_type2,driving_path_flag,act_this_per_work_qty,act_this_per_equip_qty,external_early_start_date,external_late_end_date,create_date,update_date,create_user,update_user,old_restart_date,old_reend_date,old_remain_drtn_hr_cnt
0,82179,772,10410,841,0,0,N,N,N,CP_Drtn,TT_FinMile,DT_FixedDrtn,RV_OK,TK_NotStart,GM01,Reciving Fax of Award,,-0.016667,0,0,0,0,0,0,0,0,0,2012-01-20 16:00,,,2012-01-19 16:00,2012-01-19 16:00,,2012-01-21 08:01,2012-01-21 08:01,2012-01-21 08:01,2012-01-21 08:01,2012-01-21 08:01,2012-01-21 08:01,,2012-01-19 16:00,2012-01-19 16:00,CS_MEO,PT_Normal,,,,,mAYBql7WQzuUeAh5RGjavw,,,,N,0,0,,,2012-06-18 09:56,2012-06-20 10:08,admin,admin,,,
1,82180,772,10410,841,0,0,N,N,N,CP_Drtn,TT_Mile,DT_FixedDrtn,RV_OK,TK_NotStart,GM02,Project Fab. Start,,1951.983333,1952,0,0,0,0,0,0,0,0,,,,2013-04-07 15:59,2013-04-07 15:59,,2012-06-13 08:00,2012-06-13 08:00,2012-06-13 08:00,2012-06-13 08:00,2012-06-13 08:00,2012-06-13 08:00,,2013-04-07 15:59,2013-04-07 15:59,,PT_Normal,,,,,MUGR7HsxSCatq1Lsy+yI2A,,,,N,0,0,,,2012-06-18 09:56,2012-06-20 10:08,admin,admin,,,
2,82181,772,10410,841,0,0,N,N,N,CP_Drtn,TT_Mile,DT_FixedDrtn,RV_OK,TK_NotStart,GM04,Ready for Load out ( 02nd Shipment/ Jacket & Piles ),,208,208,0,0,0,0,0,0,0,0,,,,2013-02-25 08:00,2013-02-25 08:00,,2013-01-23 08:00,2013-01-23 08:00,2013-01-23 08:00,2013-01-23 08:00,2013-01-23 08:00,2013-01-23 08:00,,2013-02-25 08:00,2013-02-25 08:00,,PT_Normal,,,,,oEdGu9OnQ0CgAkVlSv8iuw,,,,N,0,0,,,2012-06-18 09:56,2012-06-20 10:08,admin,admin,,,
3,82182,772,10410,841,0,0,N,N,N,CP_Drtn,TT_Mile,DT_FixedDrtn,RV_OK,TK_NotStart,GM05,Ready for Load out ( 03rd Shipment/ Deck C/W TSF ),,55.983333,56,0,0,0,0,0,0,0,0,,,,2013-04-07 15:59,2013-04-07 15:59,,2013-03-31 08:00,2013-03-31 08:00,2013-03-31 08:00,2013-03-31 08:00,2013-03-31 08:00,2013-03-31 08:00,,2013-04-07 15:59,2013-04-07 15:59,,PT_Normal,,,,,h7hpizZeQXG79P6YGic48A,,,,N,0,0,,,2012-06-18 09:56,2012-06-20 10:08,admin,admin,,,
4,82183,772,10410,841,0,0,N,N,N,CP_Drtn,TT_Mile,DT_FixedDrtn,RV_OK,TK_NotStart,GM03,"Ready for Load out (01st Shipment / Pipeline Spools 18"""" & 8"""")",,1119.983333,1120,0,0,0,0,0,0,0,0,,,,2013-04-07 15:59,2013-04-07 15:59,,2012-10-18 08:00,2012-10-18 08:00,2012-10-18 08:00,2012-10-18 08:00,2012-10-18 08:00,2012-10-18 08:00,,2013-04-07 15:59,2013-04-07 15:59,,PT_Normal,,,,,hwMqvqcnTaWjHD3UCB8GZQ,,,,N,0,0,,,2012-06-18 09:56,2012-06-20 10:08,admin,admin,,,
5,82184,772,10412,794,1,0,N,N,N,CP_Drtn,TT_Task,DT_FixedDrtn,RV_OK,TK_NotStart,ENS03,Receiving Jacket Primary & Secondary Steel IFC DWG`s,,0,0,1104,0,0,0,1104,0,0,0,2011-11-30 08:01,,,2011-11-30 08:01,2012-04-16 08:01,,2011-11-30 08:01,2012-04-16 08:01,2011-11-30 08:01,2012-04-16 08:01,2011-11-30 08:01,2012-04-16 08:01,,2011-11-30 08:01,2012-04-16 08:01,CS_MSO,PT_Normal,,,,,/taVGz7GStKxIdbmdm3JkA,,,,N,0,0,,,2012-06-18 09:56,2012-06-18 09:56,admin,admin,,,
6,82185,772,10412,794,0,0,N,N,N,CP_Drtn,TT_FinMile,DT_FixedDrtn,RV_OK,TK_NotStart,ENS04,Receiving Piles IFC DWG`s,,0,720,0,0,0,0,0,0,0,0,2012-01-17 08:01,,,2012-01-17 08:01,2012-01-17 08:01,,2012-01-17 08:01,2012-01-17 08:01,2012-01-17 08:01,2012-01-17 08:01,2012-01-17 08:01,2012-01-17 08:01,,2012-01-17 08:01,2012-01-17 08:01,CS_MEO,PT_Normal,,,,,Na3Aup6tShC+yRgy8OADFw,,,,N,0,0,,,2012-06-18 09:56,2012-06-18 09:56,admin,admin,,,
7,82186,772,10412,794,1,0,N,N,N,CP_Drtn,TT_Task,DT_FixedDUR2,RV_OK,TK_NotStart,ENS05,Receiving Deck Str. Primary & Secondary IFC DWG`s,,0,224,328,0,0,0,328,0,0,0,2012-02-07 08:01,,,2012-02-07 08:01,2012-03-19 08:01,,2012-02-07 08:01,2012-03-19 08:01,2012-02-07 08:01,2012-03-19 08:01,2012-02-07 08:01,2012-03-19 08:01,,2012-02-07 08:01,2012-03-19 08:01,CS_MSO,PT_Normal,,,,,fi7weAl5SEGTR2lLUeKx/w,,,,N,0,0,,,2012-06-18 09:56,2012-06-18 09:56,admin,admin,,,
8,82187,772,10412,794,0,0,N,N,N,CP_Drtn,TT_FinMile,DT_FixedDrtn,RV_OK,TK_NotStart,ENS01,"Receiving Final Jacket , Boat Land & Piles MTO",,135.983333,135.983333,0,0,0,0,0,0,0,0,,,,2012-02-14 17:00,2012-02-14 17:00,,2012-01-29 08:01,2012-01-29 08:01,2012-01-29 08:01,2012-01-29 08:01,2012-01-29 08:01,2012-01-29 08:01,,2012-02-14 17:00,2012-02-14 17:00,,PT_Normal,,,,,TPEjRmwKRrq6hsy6oKat/g,,,,N,0,0,,,2012-06-18 09:56,2012-06-20 10:08,admin,admin,,,
9,82188,772,10412,794,0,0,N,N,N,CP_Drtn,TT_FinMile,DT_FixedDrtn,RV_OK,TK_NotStart,ENS02,Receiving Final Deck Str. MTO,,135.983333,135.983333,0,0,0,0,0,0,0,0,,,,2012-02-14 17:00,2012-02-14 17:00,,2012-01-29 08:01,2012-01-29 08:01,2012-01-29 08:01,2012-01-29 08:01,2012-01-29 08:01,2012-01-29 08:01,,2012-02-14 17:00,2012-02-14 17:00,,PT_Normal,,,,,6nkSfB2oQqWjhNUPP6KgpA,,,,N,0,0,,,2012-06-18 09:56,2012-06-20 10:08,admin,admin,,,
10,82189,772,10412,794,1,0,N,N,N,CP_Drtn,TT_Task,DT_FixedDrtn,RV_OK,TK_NotStart,ENS08,Receiving IFC Equipment fixation DWG`s,,0,1559.983333,104,0,0,0,104,0,0,0,2012-04-04 08:01,,,2012-04-04 08:01,2012-04-17 08:01,,2012-04-04 08:01,2012-04-17 08:01,2012-04-04 08:01,2012-04-17 08:01,2012-04-04 08:01,2012-04-17 08:01,,2012-04-04 08:01,2012-04-17 08:01,CS_MSO,PT_Normal,,,,,mm1mBipHSJKSJiX6ECgsuA,,,,N,0,0,,,2012-06-18 09:56,2012-06-20 10:08,admin,admin,,,
11,82190,772,10412,794,1,0,N,N,N,CP_Drtn,TT_Task,DT_FixedDUR2,RV_OK,TK_NotStart,ENS06,Receiving Piping Supports IFC DWG's,,0,3078.983333,160,0,0,0,160,0,0,0,2012-02-28 08:01,,,2012-02-28 08:01,2012-03-19 08:01,,2012-02-28 08:01,2012-03-19 08:01,2012-02-28 08:01,2012-03-19 08:01,2012-02-28 08:01,2012-03-19 08:01,,2012-02-28 08:01,2012-03-19 08:01,CS_MSO,PT_Normal,,,,,00Owhd0XR8uvJLKhPzMELA,,,,N,0,0,,,2012-06-18 09:56,2012-06-20 10:08,admin,admin,,,
12,82191,772,10412,794,1,0,N,N,N,CP_Drtn,TT_Task,DT_FixedDUR2,RV_OK,TK_NotStart,ENS07,Receiving Cable tarys Support IFC DWG's,,0,3022.983333,104,0,0,0,104,0,0,0,2012-03-13 08:01,,,2012-03-13 08:01,2012-03-26 08:01,,2012-03-13 08:01,2012-03-26 08:01,2012-03-13 08:01,2012-03-26 08:01,2012-03-13 08:01,2012-03-26 08:01,,2012-03-13 08:01,2012-03-26 08:01,CS_MSO,PT_Normal,,,,,JPgGdggzREiAYSQ7vnqU2w,,,,N,0,0,,,2012-06-18 09:56,2012-06-20 10:08,admin,admin,,,
13,82192,772,10412,794,1,0,N,N,N,CP_Drtn,TT_Task,DT_FixedDrtn,RV_OK,TK_NotStart,ENS09,"Receiving P/L 8"""" & 18"""" IFC DWG's",,0,2736,160,0,0,0,160,0,0,0,2012-04-10 16:00,,,2012-04-10 16:00,2012-04-30 16:00,,2012-04-10 16:00,2012-04-30 16:00,2012-04-10 16:00,2012-04-30 16:00,2012-04-10 16:00,2012-04-30 16:00,,2012-04-10 16:00,2012-04-30 16:00,CS_MSO,PT_Normal,,,,,98Xxuu9fQZixtpBjPwMmlQ,,,,N,0,0,,,2012-06-18 09:56,2012-06-18 09:56,admin,admin,,,
14,82193,772,10413,794,1,0,N,N,N,CP_Drtn,TT_Task,DT_FixedDrtn,RV_OK,TK_NotStart,ENT03,Receiving Piping ISO`s IFC DWG's,,0,1047.983333,112,0,0,0,112,0,0,0,2012-02-27 08:01,,,2012-02-27 08:01,2012-03-12 08:01,,2012-02-27 08:01,2012-03-12 08:01,2012-02-27 08:01,2012-03-12 08:01,2012-02-27 08:01,2012-03-12 08:01,,2012-02-27 08:01,2012-03-12 08:01,CS_MSO,PT_Normal,,,,,enOOp99+SsqEvqB5hnSgoA,,,,N,0,0,,,2012-06-18 09:56,2012-06-20 10:08,admin,admin,,,
15,82194,772,10413,794,0,0,N,N,N,CP_Drtn,TT_FinMile,DT_FixedDrtn,RV_OK,TK_NotStart,ENT01,Issue Approved P&ID's / Equipment List IFC DWG's,,0,3584,0,0,0,0,0,0,0,0,2012-01-15 16:00,,,2012-01-15 16:00,2012-01-15 16:00,,2012-01-15 16:00,2012-01-15 16:00,2012-01-15 16:00,2012-01-15 16:00,2012-01-15 16:00,2012-01-15 16:00,,2012-01-15 16:00,2012-01-15 16:00,CS_MEO,PT_Normal,,,,,93sGNlW6QoCv/1ksHG2NzA,,,,N,0,0,,,2012-06-18 09:56,2012-06-18 09:56,admin,admin,,,
16,82195,772,10413,794,0,0,N,N,N,CP_Drtn,TT_FinMile,DT_FixedDrtn,RV_OK,TK_NotStart,ENT02,Issue plat plans IFC DWG's,,0,3408,0,0,0,0,0,0,0,0,2012-02-06 16:00,,,2012-02-06 16:00,2012-02-06 16:00,,2012-02-06 16:00,2012-02-06 16:00,2012-02-06 16:00,2012-02-06 16:00,2012-02-06 16:00,2012-02-06 16:00,,2012-02-06 16:00,2012-02-06 16:00,CS_MEO,PT_Normal,,,,,FmX28kBFQpGSXexVmL7Wlw,,,,N,0,0,,,2012-06-18 09:56,2012-06-18 09:56,admin,admin,,,
17,82196,772,10413,841,0,0,N,N,N,CP_Drtn,TT_FinMile,DT_FixedDrtn,RV_OK,TK_NotStart,ENT04,Issue Hydrotest maps & loops IFC DWG's,,0,2648,0,0,0,0,0,0,0,0,2012-02-28 16:00,,,2012-02-28 16:00,2012-02-28 16:00,,2012-02-28 16:00,2012-02-28 16:00,2012-02-28 16:00,2012-02-28 16:00,2012-02-28 16:00,2012-02-28 16:00,,2012-02-28 16:00,2012-02-28 16:00,CS_MEO,PT_Normal,,,,,5DGNq1VSTqKaHuj3eSEIjw,,,,N,0,0,,,2012-06-18 09:56,2012-06-18 09:56,admin,admin,,,
18,82197,772,10414,794,1,0,N,N,N,CP_Drtn,TT_Task,DT_FixedDUR2,RV_OK,TK_NotStart,ENE01,Receiving E&I IFC DWG`s,,0,2279.983333,776,0,0,0,776,0,0,0,2012-01-23 08:01,,,2012-01-23 08:01,2012-04-29 08:01,,2012-01-23 08:01,2012-04-29 08:01,2012-01-23 08:01,2012-04-29 08:01,2012-01-23 08:01,2012-04-29 08:01,,2012-01-23 08:01,2012-04-29 08:01,CS_MSO,PT_Normal,,,,,3Z6l8wXrS6642p/eM8yB1A,,,,N,0,0,,,2012-06-18 09:56,2012-06-20 10:08,admin,admin,,,
19,82198,772,10415,841,1,0,N,N,N,CP_Drtn,TT_Task,DT_FixedDUR2,RV_OK,TK_NotStart,PF01,Pre-Fabrication of Steel Structure ( Jacket & Piles),,208,0,960,0,0,0,960,0,0,0,,,,2012-07-14 08:00,2012-12-10 16:00,,2012-06-13 08:00,2012-11-08 16:00,2012-06-13 08:00,2012-11-08 16:00,2012-06-13 08:00,2012-11-08 16:00,,2012-07-14 08:00,2012-12-10 16:00,,PT_Normal,,,,,BUUxQXUKQcKvFYRqrGtbRg,,,,N,0,0,,,2012-06-18 09:56,2012-06-20 10:08,admin,admin,,,
20,82199,772,10417,794,1,0,N,N,N,CP_Drtn,TT_Task,DT_FixedDUR2,RV_OK,TK_NotStart,PRT01,Piping Bulk material 1st batch,,-0.016667,536,240,0,0,0,240,0,0,0,2012-05-07 17:00,,,2012-05-07 16:59,2012-06-06 16:59,,2012-05-08 08:00,2012-06-06 17:00,2012-05-08 08:00,2012-06-06 17:00,2012-05-08 08:00,2012-06-06 17:00,,2012-05-07 16:59,2012-06-06 16:59,CS_MSO,PT_Normal,,,,,DqLN36xRQY+kZsfpyGsU9w,yl9WvSBhsUKXjamnJ9tBwA,,,N,0,0,,,2012-06-18 09:56,2012-06-20 10:08,admin,admin,,,
21,82200,772,10417,794,1,0,N,N,N,CP_Drtn,TT_Task,DT_FixedDUR2,RV_OK,TK_NotStart,PRT02,Piping Bulk material 2nd batch,,-0.016667,855,240,0,0,0,240,0,0,0,2012-06-10 17:00,,,2012-06-10 16:59,2012-07-10 16:59,,2012-06-11 08:00,2012-07-10 17:00,2012-06-11 08:00,2012-07-10 17:00,2012-06-11 08:00,2012-07-10 17:00,,2012-06-10 16:59,2012-07-10 16:59,CS_MSO,PT_Normal,,,,,fRmh57i3SamJM0o1p2/3vA,hlpmj5RDM0ug86CkeyGt7w,,,N,0,0,,,2012-06-18 09:56,2012-06-20 10:08,admin,admin,,,
22,82201,772,10417,794,1,0,N,N,N,CP_Drtn,TT_Task,DT_FixedDUR2,RV_OK,TK_NotStart,PRT03,Piping Valves Bulk material 1st batch,,-0.016667,999,112,0,0,0,112,0,0,0,2012-06-23 17:00,,,2012-06-23 16:59,2012-07-07 16:59,,2012-06-24 08:00,2012-07-07 17:00,2012-06-24 08:00,2012-07-07 17:00,2012-06-24 08:00,2012-07-07 17:00,,2012-06-23 16:59,2012-07-07 16:59,CS_MSO,PT_Normal,,,,,7wg9/w/MQ7a7zI20+pTM+A,GizpIK9AB0igoR6gZc1u/Q,,,N,0,0,,,2012-06-18 09:56,2012-06-20 10:08,admin,admin,,,
23,82202,772,10417,794,1,0,N,N,N,CP_Drtn,TT_Task,DT_FixedDUR2,RV_OK,TK_NotStart,PRT04,Piping valves Bulk material 2nd batch,,-0.016667,767,112,0,0,0,112,0,0,0,2012-07-22 17:00,,,2012-07-22 16:59,2012-08-05 16:59,,2012-07-23 08:00,2012-08-05 17:00,2012-07-23 08:00,2012-08-05 17:00,2012-07-23 08:00,2012-08-05 17:00,,2012-07-22 16:59,2012-08-05 16:59,CS_MSO,PT_Normal,,,,,iGFfO+XNTpqt+16+eOx2EA,UK1YuP2nDUesL7urCII2Dw,,,N,0,0,,,2012-06-18 09:56,2012-06-20 10:08,admin,admin,,,
24,82203,772,10417,794,1,0,N,N,N,CP_Drtn,TT_Task,DT_FixedDUR2,RV_OK,TK_NotStart,PRT05,Flanges,,-0.016667,8,360,0,0,0,360,0,0,0,2012-07-13 17:00,,,2012-07-13 16:59,2012-08-27 16:59,,2012-07-14 08:00,2012-08-27 17:00,2012-07-14 08:00,2012-08-27 17:00,2012-07-14 08:00,2012-08-27 17:00,,2012-07-13 16:59,2012-08-27 16:59,CS_MSO,PT_Normal,,,,,VAq1SSMERrmj1gqIqoQiTg,Ex31o9Pan0OuXqbrZEGEag,,,N,0,0,,,2012-06-18 09:56,2012-06-20 10:08,admin,admin,,,
25,82204,772,10417,794,1,0,N,N,N,CP_Drtn,TT_Task,DT_FixedDUR2,RV_OK,TK_NotStart,PRT06,Pressure Safety Valve,,-0.016667,1519,352,0,0,0,352,0,0,0,2012-06-04 17:00,,,2012-06-04 16:59,2012-07-18 16:59,,2012-06-05 08:00,2012-07-18 17:00,2012-06-05 08:00,2012-07-18 17:00,2012-06-05 08:00,2012-07-18 17:00,,2012-06-04 16:59,2012-07-18 16:59,CS_MSO,PT_Normal,,,,,+SvOOjbVT6SM2f4LWOHEpg,F7qZYQ2pcEuIGt99a45cYg,,,N,0,0,,,2012-06-18 09:56,2012-06-20 10:08,admin,admin,,,
26,82205,772,10417,794,1,0,N,N,N,CP_Drtn,TT_Task,DT_FixedDUR2,RV_OK,TK_NotStart,PRT07,Pressure regulator Valve,,-0.016667,1231,240,0,0,0,240,0,0,0,2012-07-24 17:00,,,2012-07-24 16:59,2012-08-23 16:59,,2012-07-25 08:00,2012-08-23 17:00,2012-07-25 08:00,2012-08-23 17:00,2012-07-25 08:00,2012-08-23 17:00,,2012-07-24 16:59,2012-08-23 16:59,CS_MSO,PT_Normal,,,,,FkVucARhQlCiyikicegBhQ,j+Gn0C3OAUWl0C1SspHgPw,,,N,0,0,,,2012-06-18 09:56,2012-06-20 10:08,admin,admin,,,
27,82206,772,10417,794,1,0,N,N,N,CP_Drtn,TT_Task,DT_FixedDUR2,RV_OK,TK_NotStart,PRT08,Shutdown Valve,,-0.016667,1135,248,0,0,0,248,0,0,0,2012-08-04 17:00,,,2012-08-04 16:59,2012-09-04 16:59,,2012-08-05 08:00,2012-09-04 17:00,2012-08-05 08:00,2012-09-04 17:00,2012-08-05 08:00,2012-09-04 17:00,,2012-08-04 16:59,2012-09-04 16:59,CS_MSO,PT_Normal,,,,,GViNUzKNR0i8XYjXx02J5Q,teAPEnX+OEanjGoc9mUlTg,,,N,0,0,,,2012-06-18 09:56,2012-06-20 10:08,admin,admin,,,
28,82207,772,10418,794,1,0,N,N,N,CP_Drtn,TT_Task,DT_FixedDUR2,RV_OK,TK_NotStart,PRT09,Chemical Injection PKG.,,-0.016667,1264,360,0,0,0,360,0,0,0,2012-05-08 17:00,,,2012-05-08 16:59,2012-06-22 16:59,,2012-05-09 08:00,2012-06-22 17:00,2012-05-09 08:00,2012-06-22 17:00,2012-05-09 08:00,2012-06-22 17:00,,2012-05-08 16:59,2012-06-22 16:59,CS_MSO,PT_Normal,,,,,eKvs6VRWSyOb6HNtkF9+AA,yl9WvSBhsUKXjamnJ9tBwA,,,N,0,0,,,2012-06-18 09:56,2012-06-20 10:08,admin,admin,,,
29,82208,772,10418,794,1,0,N,N,N,CP_Drtn,TT_Task,DT_FixedDUR2,RV_OK,TK_NotStart,PRT10,Launcher recivier,,-0.016667,960,360,0,0,0,360,0,0,0,2012-06-15 17:00,,,2012-06-15 16:59,2012-07-30 16:59,,2012-06-16 08:00,2012-07-30 17:00,2012-06-16 08:00,2012-07-30 17:00,2012-06-16 08:00,2012-07-30 17:00,,2012-06-15 16:59,2012-07-30 16:59,CS_MSO,PT_Normal,,,,,3IwzhhfhR3KgxUsvdJ6rqQ,hlpmj5RDM0ug86CkeyGt7w,,,N,0,0,,,2012-06-18 09:56,2012-06-20 10:08,admin,admin,,,
30,82209,772,10418,794,1,0,N,N,N,CP_Drtn,TT_Task,DT_FixedDUR2,RV_OK,TK_NotStart,PRT11,Vent KOD,,-0.016667,864,360,0,0,0,360,0,0,0,2012-06-27 17:00,,,2012-06-27 16:59,2012-08-11 16:59,,2012-06-28 08:00,2012-08-11 17:00,2012-06-28 08:00,2012-08-11 17:00,2012-06-28 08:00,2012-08-11 17:00,,2012-06-27 16:59,2012-08-11 16:59,CS_MSO,PT_Normal,,,,,V+De5pWvTHyHzJo6bSHRww,GizpIK9AB0igoR6gZc1u/Q,,,N,0,0,,,2012-06-18 09:56,2012-06-20 10:08,admin,admin,,,
31,82210,772,10418,794,1,0,N,N,N,CP_Drtn,TT_Task,DT_FixedDUR2,RV_OK,TK_NotStart,PRT12,Open Drain Tank,,-0.016667,624,360,0,0,0,360,0,0,0,2012-06-27 17:00,,,2012-06-27 16:59,2012-08-11 16:59,,2012-06-28 08:00,2012-08-11 17:00,2012-06-28 08:00,2012-08-11 17:00,2012-06-28 08:00,2012-08-11 17:00,,2012-06-27 16:59,2012-08-11 16:59,CS_MSO,PT_Normal,,,,,Dvo6DiXYTvSm95/lOoAUnw,UK1YuP2nDUesL7urCII2Dw,,,N,0,0,,,2012-06-18 09:56,2012-06-20 10:08,admin,admin,,,
32,82211,772,10419,794,1,0,N,N,N,CP_Drtn,TT_Task,DT_FixedDUR2,RV_OK,TK_NotStart,PRS03,Delivery of Structure Material (F.O.B - 13 Wks.) - (Gupco Responsability),,0,0,728,0,0,0,728,0,0,0,,,,2012-02-15 08:00,2012-05-15 17:00,,2012-02-15 08:00,2012-05-15 17:00,2012-02-15 08:00,2012-05-15 17:00,2012-02-15 08:00,2012-05-15 17:00,,2012-02-15 08:00,2012-05-15 17:00,,PT_Normal,,,,,dmjGd5dtRyGQN7eIgjvWtA,698/E0SRuUS4pAlggO6l9g,,,Y,0,0,,,2012-06-18 09:56,2012-06-20 10:09,admin,admin,,,
33,82212,772,10419,794,1,0,N,N,N,CP_Drtn,TT_Task,DT_FixedDUR2,RV_OK,TK_NotStart,PRS05,Material check with IFC DWG's to Prepare balance material,,1566.983333,0,56,0,0,0,56,0,0,0,,,,2012-10-28 16:00,2012-11-04 16:00,,2012-04-16 08:01,2012-04-23 08:01,2012-04-16 08:01,2012-04-23 08:01,2012-04-16 08:01,2012-04-23 08:01,,2012-10-28 16:00,2012-11-04 16:00,,PT_Normal,,,,,TiJCnNvxQjGqD/lEVDLgtw,,,,N,0,0,,,2012-06-18 09:56,2012-06-20 10:08,admin,admin,,,
34,82213,772,10419,794,1,0,N,N,N,CP_Drtn,TT_Task,DT_FixedDUR2,RV_OK,TK_NotStart,PRS06,Delivery of balance material,,1566.983333,1566.983333,1232,0,0,0,1232,0,0,0,,,,2012-11-04 16:00,2013-04-07 16:00,,2012-04-23 08:01,2012-09-24 08:01,2012-04-23 08:01,2012-09-24 08:01,2012-04-23 08:01,2012-09-24 08:01,,2012-11-04 16:00,2013-04-07 16:00,,PT_Normal,,,,,oU6FnPOSQS+kCV/HY5y5yA,,,,N,0,0,,,2012-06-18 09:56,2012-06-20 10:08,admin,admin,,,
35,82214,772,10419,794,0,0,N,N,N,CP_Drtn,TT_Mile,DT_FixedDrtn,RV_OK,TK_NotStart,PRS01,Issue Structural Material P.O's ( Gupco Responsability),,0,64,0,0,0,0,0,0,0,0,2012-02-07 08:00,,,2012-02-07 08:00,2012-02-07 08:00,,2012-02-07 08:00,2012-02-07 08:00,2012-02-07 08:00,2012-02-07 08:00,2012-02-07 08:00,2012-02-07 08:00,,2012-02-07 08:00,2012-02-07 08:00,CS_MSO,PT_Normal,,,,,xF9X1iufT72bd1+OFKWOyQ,,,,N,0,0,,,2012-06-18 09:56,2012-06-18 09:56,admin,admin,,,
36,82215,772,10419,794,0,0,N,N,N,CP_Drtn,TT_Mile,DT_FixedDrtn,RV_OK,TK_NotStart,PRS02,Issue LC ( Gupco Responsability),,0,0,0,0,0,0,0,0,0,0,2012-02-15 08:00,,,2012-02-15 08:00,2012-02-15 08:00,,2012-02-15 08:00,2012-02-15 08:00,2012-02-15 08:00,2012-02-15 08:00,2012-02-15 08:00,2012-02-15 08:00,,2012-02-15 08:00,2012-02-15 08:00,CS_MSO,PT_Normal,,,,,um/v71UCSm2K8HwIWZ36mg,,,,Y,0,0,,,2012-06-18 09:56,2012-06-20 10:09,admin,admin,,,
37,82216,772,10419,794,1,0,N,N,N,CP_Drtn,TT_Task,DT_FixedDUR2,RV_OK,TK_NotStart,PRS04,Delivery of Structure Material at Site (4 Wks.),,0,0,224,0,0,0,224,0,0,0,,,,2012-05-16 08:00,2012-06-12 17:00,,2012-05-16 08:00,2012-06-12 17:00,2012-05-16 08:00,2012-06-12 17:00,2012-05-16 08:00,2012-06-12 17:00,,2012-05-16 08:00,2012-06-12 17:00,,PT_Normal,,,,,FqPfFJhLQ+SL9TfNEDcs7w,,,,Y,0,0,,,2012-06-18 09:56,2012-06-20 10:09,admin,admin,,,
38,82217,772,10420,794,1,0,N,N,N,CP_Drtn,TT_Task,DT_FixedDrtn,RV_OK,TK_NotStart,PRP01,"Pipeline 18"""" & Fittings",,0,0,408,0,0,0,408,0,0,0,2012-05-31 08:00,,,2012-05-31 08:00,2012-07-20 17:00,,2012-05-31 08:00,2012-07-20 17:00,2012-05-31 08:00,2012-07-20 17:00,2012-05-31 08:00,2012-07-20 17:00,,2012-05-31 08:00,2012-07-20 17:00,CS_MSO,PT_Normal,,,,,8zKzqtp8RUKmTAsXxykRFA,,,,N,0,0,,,2012-06-18 09:56,2012-06-18 09:56,admin,admin,,,
39,82218,772,10420,794,1,0,N,N,N,CP_Drtn,TT_Task,DT_FixedDrtn,RV_OK,TK_NotStart,PRP02,"Pipeline 8"""" & Fittings",,-0.016667,351,408,0,0,0,408,0,0,0,2012-05-30 17:00,,,2012-05-30 16:59,2012-07-20 16:59,,2012-05-31 08:00,2012-07-20 17:00,2012-05-31 08:00,2012-07-20 17:00,2012-05-31 08:00,2012-07-20 17:00,,2012-05-30 16:59,2012-07-20 16:59,CS_MSO,PT_Normal,,,,,Z/LKROCTRSGDBSNh6tw23g,yl9WvSBhsUKXjamnJ9tBwA,,,N,0,0,,,2012-06-18 09:56,2012-06-20 10:08,admin,admin,,,
40,82219,772,10422,794,1,0,N,N,N,CP_Drtn,TT_Task,DT_FixedDUR2,RV_OK,TK_NotStart,PRE07,Radar system,,-0.016667,904,240,0,0,0,240,0,0,0,2012-06-19 17:00,,,2012-06-19 16:59,2012-07-19 16:59,,2012-06-20 08:00,2012-07-19 17:00,2012-06-20 08:00,2012-07-19 17:00,2012-06-20 08:00,2012-07-19 17:00,,2012-06-19 16:59,2012-07-19 16:59,CS_MSO,PT_Normal,,,,,fN9/pTqqS/2bIA0m5B7Ztw,hR+VpIi9/EScdnqRSGSfwg,,,N,0,0,,,2012-06-18 09:56,2012-06-20 10:08,admin,admin,,,
41,82220,772,10422,794,1,0,N,N,N,CP_Drtn,TT_Task,DT_FixedDUR2,RV_OK,TK_NotStart,PRE08,Navegation Aids,,-0.016667,1384,360,0,0,0,360,0,0,0,2012-04-05 17:00,,,2012-04-05 16:59,2012-05-20 16:59,,2012-04-06 08:00,2012-05-20 17:00,2012-04-06 08:00,2012-05-20 17:00,2012-04-06 08:00,2012-05-20 17:00,,2012-04-05 16:59,2012-05-20 16:59,CS_MSO,PT_Normal,,,,,/agS5N51QBGq3ZFFA4yHkQ,BsriHSUEkEGgiUy2IxXEwg,,,N,0,0,,,2012-06-18 09:56,2012-06-20 10:08,admin,admin,,,
42,82221,772,10423,794,1,0,N,N,N,CP_Drtn,TT_Task,DT_FixedDUR2,RV_OK,TK_NotStart,PRE01,Electrical Bulks,,-0.016667,512,360,0,0,0,360,0,0,0,2012-07-23 17:00,,,2012-07-23 16:59,2012-09-06 16:59,,2012-07-24 08:00,2012-09-06 17:00,2012-07-24 08:00,2012-09-06 17:00,2012-07-24 08:00,2012-09-06 17:00,,2012-07-23 16:59,2012-09-06 16:59,CS_MSO,PT_Normal,,,,,vQ/i5SbETo6/zhp0lbrKxA,,,,N,0,0,,,2012-06-18 09:56,2012-06-20 10:08,admin,admin,,,
43,82222,772,10423,794,1,0,N,N,N,CP_Drtn,TT_Task,DT_FixedDUR2,RV_OK,TK_NotStart,PRE02,Cathodic Protection,,-0.016667,1000,360,0,0,0,360,0,0,0,2012-05-23 17:00,,,2012-05-23 16:59,2012-07-07 16:59,,2012-05-24 08:00,2012-07-07 17:00,2012-05-24 08:00,2012-07-07 17:00,2012-05-24 08:00,2012-07-07 17:00,,2012-05-23 16:59,2012-07-07 16:59,CS_MSO,PT_Normal,,,,,Iw4lArETRiW8xPu6VxnShg,,,,N,0,0,,,2012-06-18 09:56,2012-06-20 10:08,admin,admin,,,
44,82223,772,10423,794,1,0,N,N,N,CP_Drtn,TT_Task,DT_FixedDUR2,RV_OK,TK_NotStart,PRE03,Solar Power,,-0.016667,912,360,0,0,0,360,0,0,0,2012-06-03 17:00,,,2012-06-03 16:59,2012-07-18 16:59,,2012-06-04 08:00,2012-07-18 17:00,2012-06-04 08:00,2012-07-18 17:00,2012-06-04 08:00,2012-07-18 17:00,,2012-06-03 16:59,2012-07-18 16:59,CS_MSO,PT_Normal,,,,,VN0an5lGRoaFh0fMNvkkFA,,,,N,0,0,,,2012-06-18 09:56,2012-06-20 10:08,admin,admin,,,
45,82224,772,10424,794,1,0,N,N,N,CP_Drtn,TT_Task,DT_FixedDUR2,RV_OK,TK_NotStart,PRE04,F&G Detector,,-0.016667,648,360,0,0,0,360,0,0,0,2012-07-06 17:00,,,2012-07-06 16:59,2012-08-20 16:59,,2012-07-07 08:00,2012-08-20 17:00,2012-07-07 08:00,2012-08-20 17:00,2012-07-07 08:00,2012-08-20 17:00,,2012-07-06 16:59,2012-08-20 16:59,CS_MSO,PT_Normal,,,,,VSwOK9yIRUSoxROQDvdw7g,hR+VpIi9/EScdnqRSGSfwg,,,N,0,0,,,2012-06-18 09:56,2012-06-20 10:08,admin,admin,,,
46,82225,772,10424,794,1,0,N,N,N,CP_Drtn,TT_Task,DT_FixedDUR2,RV_OK,TK_NotStart,PRE05,Fire fighting system,,-0.016667,720,360,0,0,0,360,0,0,0,2012-06-27 17:00,,,2012-06-27 16:59,2012-08-11 16:59,,2012-06-28 08:00,2012-08-11 17:00,2012-06-28 08:00,2012-08-11 17:00,2012-06-28 08:00,2012-08-11 17:00,,2012-06-27 16:59,2012-08-11 16:59,CS_MSO,PT_Normal,,,,,tpzm+A81SOKv9OzobhMGlw,BsriHSUEkEGgiUy2IxXEwg,,,N,0,0,,,2012-06-18 09:56,2012-06-20 10:08,admin,admin,,,
47,82226,772,10424,794,1,0,N,N,N,CP_Drtn,TT_Task,DT_FixedDUR2,RV_OK,TK_NotStart,PRE06,Life Saving Equipment,,-0.016667,664,360,0,0,0,360,0,0,0,2012-07-04 17:00,,,2012-07-04 16:59,2012-08-18 16:59,,2012-07-05 08:00,2012-08-18 17:00,2012-07-05 08:00,2012-08-18 17:00,2012-07-05 08:00,2012-08-18 17:00,,2012-07-04 16:59,2012-08-18 16:59,CS_MSO,PT_Normal,,,,,KFlMp1iuR7Ggn/R36j8DNg,BMPt6NUgQkm3eBH1L9b0qA,,,N,0,0,,,2012-06-18 09:56,2012-06-20 10:08,admin,admin,,,
48,82227,772,10425,794,1,0,N,N,N,CP_Drtn,TT_Task,DT_FixedDUR2,RV_OK,TK_NotStart,PRE09,Instrument Electical Bulk,,-0.016667,624,240,0,0,0,240,0,0,0,2012-07-24 17:00,,,2012-07-24 16:59,2012-08-23 16:59,,2012-07-25 08:00,2012-08-23 17:00,2012-07-25 08:00,2012-08-23 17:00,2012-07-25 08:00,2012-08-23 17:00,,2012-07-24 16:59,2012-08-23 16:59,CS_MSO,PT_Normal,,,,,nbERwAGrT3emToa6M54rSw,hR+VpIi9/EScdnqRSGSfwg,,,N,0,0,,,2012-06-18 09:56,2012-06-20 10:08,admin,admin,,,
49,82228,772,10425,794,1,0,N,N,N,CP_Drtn,TT_Task,DT_FixedDUR2,RV_OK,TK_NotStart,PRE10,Instrument Mechanical Bulk,,-0.016667,640,280,0,0,0,280,0,0,0,2012-07-17 17:00,,,2012-07-17 16:59,2012-08-21 16:59,,2012-07-18 08:00,2012-08-21 17:00,2012-07-18 08:00,2012-08-21 17:00,2012-07-18 08:00,2012-08-21 17:00,,2012-07-17 16:59,2012-08-21 16:59,CS_MSO,PT_Normal,,,,,I5ckdTYuQTKukOCM1JedFw,BsriHSUEkEGgiUy2IxXEwg,,,N,0,0,,,2012-06-18 09:56,2012-06-20 10:08,admin,admin,,,
50,82229,772,10425,794,1,0,N,N,N,CP_Drtn,TT_Task,DT_FixedDUR2,RV_OK,TK_NotStart,PRE11,Field Instrument,,-0.016667,760,360,0,0,0,360,0,0,0,2012-06-22 17:00,,,2012-06-22 16:59,2012-08-06 16:59,,2012-06-23 08:00,2012-08-06 17:00,2012-06-23 08:00,2012-08-06 17:00,2012-06-23 08:00,2012-08-06 17:00,,2012-06-22 16:59,2012-08-06 16:59,CS_MSO,PT_Normal,,,,,M/41QxsNRJS7+vZ1Rp7jJg,BMPt6NUgQkm3eBH1L9b0qA,,,N,0,0,,,2012-06-18 09:56,2012-06-20 10:08,admin,admin,,,
51,82230,772,10425,794,1,0,N,N,N,CP_Drtn,TT_Task,DT_FixedDUR2,RV_OK,TK_NotStart,PRE12,multi phase flow meter,,-0.016667,1095,456,0,0,0,456,0,0,0,2012-07-17 17:00,,,2012-07-17 16:59,2012-09-12 16:59,,2012-07-18 08:00,2012-09-12 17:00,2012-07-18 08:00,2012-09-12 17:00,2012-07-18 08:00,2012-09-12 17:00,,2012-07-17 16:59,2012-09-12 16:59,CS_MSO,PT_Normal,,,,,VbJvQNUwQvmr5G5TNU296w,Mkb86m2/TUuHJY33o39Fuw,,,N,0,0,,,2012-06-18 09:56,2012-06-20 10:08,admin,admin,,,
52,82231,772,10425,794,1,0,N,N,N,CP_Drtn,TT_Task,DT_FixedDUR2,RV_OK,TK_NotStart,PRE13,Safe Guard system,,-0.016667,1063,240,0,0,0,240,0,0,0,2012-08-17 17:00,,,2012-08-17 16:59,2012-09-16 16:59,,2012-08-18 08:00,2012-09-16 17:00,2012-08-18 08:00,2012-09-16 17:00,2012-08-18 08:00,2012-09-16 17:00,,2012-08-17 16:59,2012-09-16 16:59,CS_MSO,PT_Normal,,,,,jReSS16pSoan6pMZsdEk8g,,,,N,0,0,,,2012-06-18 09:56,2012-06-20 10:08,admin,admin,,,
53,82232,772,10427,841,1,0,N,N,N,CP_Drtn,TT_Task,DT_FixedDUR2,RV_OK,TK_NotStart,JK01,"Jacket , Boat Landing Fabrication & Painting",,208,0,1400,0,0,0,1400,0,0,0,,,,2012-07-22 08:00,2013-02-24 16:00,,2012-06-21 08:00,2013-01-22 16:00,2012-06-21 08:00,2013-01-22 16:00,2012-06-21 08:00,2013-01-22 16:00,,2012-07-22 08:00,2013-02-24 16:00,,PT_Normal,,,,,MJjexNjLRy6cxfkloFqepA,,,,N,0,0,,,2012-06-18 09:56,2012-06-20 10:08,admin,admin,,,
54,82233,772,10427,841,1,0,N,N,N,CP_Drtn,TT_Task,DT_FixedDUR2,RV_OK,TK_NotStart,JK02,Piles Fabrication & Marking,,592,592,1000,0,0,0,1000,0,0,0,,,,2012-11-08 08:00,2013-04-07 16:00,,2012-08-06 08:00,2013-01-08 16:00,2012-08-06 08:00,2013-01-08 16:00,2012-08-06 08:00,2013-01-08 16:00,,2012-11-08 08:00,2013-04-07 16:00,,PT_Normal,,,,,cmwt03k5QUWVZ2X2eta6kg,,,,N,0,0,,,2012-06-18 09:56,2012-06-18 09:56,admin,admin,,,
55,82234,772,10429,841,1,0,N,N,N,CP_Drtn,TT_Task,DT_FixedDUR2,RV_OK,TK_NotStart,DS001,Fabrication and Painting of Below Production Deck/Legs,,0,0,840,0,0,0,840,0,0,0,,,,2012-06-13 08:00,2012-10-18 16:00,,2012-06-13 08:00,2012-10-18 16:00,2012-06-13 08:00,2012-10-18 16:00,2012-06-13 08:00,2012-10-18 16:00,,2012-06-13 08:00,2012-10-18 16:00,,PT_Normal,,,,,YDhnGt4WSampcAcCK/B2gQ,,,,Y,0,0,,,2012-06-18 09:56,2012-06-20 10:09,admin,admin,,,
56,82235,772,10429,841,1,0,N,N,N,CP_Drtn,TT_Task,DT_FixedDUR2,RV_OK,TK_NotStart,DS002,Fabrication and Painting of Production Deck,,0,0,960,0,0,0,960,0,0,0,,,,2012-06-13 08:00,2012-11-08 16:00,,2012-06-13 08:00,2012-11-08 16:00,2012-06-13 08:00,2012-11-08 16:00,2012-06-13 08:00,2012-11-08 16:00,,2012-06-13 08:00,2012-11-08 16:00,,PT_Normal,,,,,xFi93CoKSi++4GmIMxpP9w,b7vZh9Ccpk+EXT4kXe5yzg,,,Y,0,0,,,2012-06-18 09:56,2012-06-20 10:09,admin,admin,,,
57,82236,772,10429,841,1,0,N,N,N,CP_Drtn,TT_Task,DT_FixedDUR2,RV_OK,TK_NotStart,DS003,Fabrication and Paint of Heli-Deck ( & Lifting if Required),,400,0,960,0,0,0,960,0,0,0,,,,2012-10-29 08:00,2013-03-21 16:00,,2012-08-27 08:00,2013-01-20 16:00,2012-08-27 08:00,2013-01-20 16:00,2012-08-27 08:00,2013-01-20 16:00,,2012-10-29 08:00,2013-03-21 16:00,,PT_Normal,,,,,rvAg4dTFTzOC9LQPbMvlVA,JC1t+n1vH0eDZIP7mK52AA,,,N,0,0,,,2012-06-18 09:56,2012-06-18 09:56,admin,admin,,,
58,82237,772,10429,841,1,0,N,N,N,CP_Drtn,TT_Task,DT_FixedDUR2,RV_OK,TK_NotStart,DS004,Lifting Below Production Deck on High Cups,,24,0,40,0,0,0,40,0,0,0,,,,2012-10-23 08:00,2012-10-31 16:00,,2012-10-20 08:00,2012-10-24 16:00,2012-10-20 08:00,2012-10-24 16:00,2012-10-20 08:00,2012-10-24 16:00,,2012-10-23 08:00,2012-10-31 16:00,,PT_Normal,,,,,bQ+CxC0TQriVcwNqie/vXQ,,,,N,0,0,,,2012-06-18 09:56,2012-06-18 09:56,admin,admin,,,
59,82238,772,10429,841,1,0,N,N,N,CP_Drtn,TT_Task,DT_FixedDUR2,RV_OK,TK_NotStart,DS005,Lifting Production Deck on Below Production Level,,0,0,120,0,0,0,120,0,0,0,,,,2012-11-10 08:00,2012-11-27 16:00,,2012-11-10 08:00,2012-11-27 16:00,2012-11-10 08:00,2012-11-27 16:00,2012-11-10 08:00,2012-11-27 16:00,,2012-11-10 08:00,2012-11-27 16:00,,PT_Normal,,,,,kvv6UChdRT2TML26fqP2Og,,,,Y,0,0,,,2012-06-18 09:56,2012-06-20 10:09,admin,admin,,,
60,82239,772,10429,841,1,0,N,N,N,CP_Drtn,TT_Task,DT_FixedDUR2,RV_OK,TK_NotStart,DS006,Fabrication & Installation of Deck Str. Miscellence / Padeyes,,80,24,960,0,0,0,960,0,0,0,,,,2012-10-17 08:00,2013-03-13 16:00,,2012-10-04 08:00,2013-03-02 16:00,2012-10-04 08:00,2013-03-02 16:00,2012-10-04 08:00,2013-03-02 16:00,,2012-10-17 08:00,2013-03-13 16:00,,PT_Normal,,,,,CWEx43mfRrCS6ZOEt8Q5OA,,,,N,0,0,,,2012-06-18 09:56,2012-06-18 09:56,admin,admin,,,
61,82240,772,10429,841,0,0,N,N,N,CP_Drtn,TT_FinMile,DT_FixedDrtn,RV_OK,TK_NotStart,DS007,Physical Weighting,,80,0,0,0,0,0,0,0,0,0,,,,2013-03-06 16:00,2013-03-06 16:00,,2013-02-23 16:00,2013-02-23 16:00,2013-02-23 16:00,2013-02-23 16:00,2013-02-23 16:00,2013-02-23 16:00,,2013-03-06 16:00,2013-03-06 16:00,,PT_Normal,,,,,dU19c7ngSBGK2PpNjJWMWA,,,,N,0,0,,,2012-06-18 09:56,2012-06-18 09:56,admin,admin,,,
62,82241,772,10429,841,1,0,N,N,N,CP_Drtn,TT_Task,DT_FixedDUR2,RV_OK,TK_NotStart,DS008,Clearanse of structure (Fab. & Painting ) Punch List,,56,56,168,0,0,0,168,0,0,0,,,,2013-03-14 08:00,2013-04-07 16:00,,2013-03-06 08:00,2013-03-30 16:00,2013-03-06 08:00,2013-03-30 16:00,2013-03-06 08:00,2013-03-30 16:00,,2013-03-14 08:00,2013-04-07 16:00,,PT_Normal,,,,,2xbSngZtS1yuYdYRZesY/A,,,,N,0,0,,,2012-06-18 09:56,2012-06-18 09:56,admin,admin,,,
63,82242,772,10431,841,1,0,N,N,N,CP_Drtn,TT_Task,DT_FixedDUR2,RV_OK,TK_NotStart,TFS001,Piping and Piping Supports Fabrication and Painting,,320,320,800,0,0,0,800,0,0,0,,,,2012-09-10 08:00,2013-01-10 16:00,,2012-07-21 08:00,2012-11-24 16:00,2012-07-21 08:00,2012-11-24 16:00,2012-07-21 08:00,2012-11-24 16:00,,2012-09-10 08:00,2013-01-10 16:00,,PT_Normal,,,,,MmyOxGLAQBKzrY9ic24SKw,,,,N,0,0,,,2012-06-18 09:56,2012-06-18 09:56,admin,admin,,,
64,82243,772,10431,841,1,0,N,N,N,CP_Drtn,TT_Task,DT_FixedDUR2,RV_OK,TK_NotStart,TSF002,Piping and Piping Supports Erection,,0,0,600,0,0,0,600,0,0,0,,,,2012-11-25 08:00,2013-02-23 16:00,,2012-11-25 08:00,2013-02-23 16:00,2012-11-25 08:00,2013-02-23 16:00,2012-11-25 08:00,2013-02-23 16:00,,2012-11-25 08:00,2013-02-23 16:00,,PT_Normal,,,,,sdcBHYglTkmbL+zUfSnz1Q,,,,Y,0,0,,,2012-06-18 09:56,2012-06-20 10:09,admin,admin,,,
65,82244,772,10432,841,1,0,N,N,N,CP_Drtn,TT_Task,DT_FixedDUR2,RV_OK,TK_NotStart,TSF003,Equipment Erection on Below Production Level,,24,24,56,0,0,0,56,0,0,0,,,,2012-11-01 08:00,2012-11-08 16:00,,2012-10-29 08:00,2012-11-05 16:00,2012-10-29 08:00,2012-11-05 16:00,2012-10-29 08:00,2012-11-05 16:00,,2012-11-01 08:00,2012-11-08 16:00,,PT_Normal,,,,,z1CTK+RVT2ODKyZP+ZU/NQ,,,,N,0,0,,,2012-06-18 09:56,2012-06-18 09:56,admin,admin,,,
66,82245,772,10432,841,1,0,N,N,N,CP_Drtn,TT_Task,DT_FixedDUR2,RV_OK,TK_NotStart,TSF004,Equipment Erection on Production Level,,216,216,120,0,0,0,120,0,0,0,,,,2012-12-30 08:00,2013-01-16 16:00,,2012-11-28 08:00,2012-12-15 16:00,2012-11-28 08:00,2012-12-15 16:00,2012-11-28 08:00,2012-12-15 16:00,,2012-12-30 08:00,2013-01-16 16:00,,PT_Normal,,,,,uRd8e2PwTCikyeTQ2cwlXg,,,,N,0,0,,,2012-06-18 09:56,2012-06-18 09:56,admin,admin,,,
67,82246,772,10432,841,1,0,N,N,N,CP_Drtn,TT_Task,DT_FixedDUR2,RV_OK,TK_NotStart,TSF005,Equipment Erection on Helideck,,400,400,56,0,0,0,56,0,0,0,,,,2013-02-16 08:00,2013-02-23 16:00,,2012-12-16 08:00,2012-12-23 16:00,2012-12-16 08:00,2012-12-23 16:00,2012-12-16 08:00,2012-12-23 16:00,,2013-02-16 08:00,2013-02-23 16:00,,PT_Normal,,,,,aPJaRDLhRCS2fQT2L4W4XQ,,,,N,0,0,,,2012-06-18 09:56,2012-06-18 09:56,admin,admin,,,
68,82247,772,10433,841,1,0,N,N,N,CP_Drtn,TT_Task,DT_FixedDUR2,RV_OK,TK_NotStart,TS07,E&I Activity,,16,16,720,0,0,0,720,0,0,0,,,,2012-11-12 08:00,2013-02-28 16:00,,2012-11-10 08:00,2013-02-26 16:00,2012-11-10 08:00,2013-02-26 16:00,2012-11-10 08:00,2013-02-26 16:00,,2012-11-12 08:00,2013-02-28 16:00,,PT_Normal,,,,,wsdfJJRZTh6vVDGXiSaIkQ,,,,N,0,0,,,2012-06-18 09:56,2012-06-18 09:56,admin,admin,,,
69,82248,772,10434,841,1,0,N,N,N,CP_Drtn,TT_Task,DT_FixedDUR2,RV_OK,TK_NotStart,TS08,"Pre-commissioning """" Piping Hydrotest , Reinstatment , Megering , Continuity Test and Touch Up """"",,0,0,280,0,0,0,280,0,0,0,,,,2013-02-18 08:00,2013-03-30 16:00,,2013-02-18 08:00,2013-03-30 16:00,2013-02-18 08:00,2013-03-30 16:00,2013-02-18 08:00,2013-03-30 16:00,,2013-02-18 08:00,2013-03-30 16:00,,PT_Normal,,,,,lPjrgJbBSWyVdJYtkd0lWQ,,,,Y,0,0,,,2012-06-18 09:56,2012-06-20 10:09,admin,admin,,,
70,82249,772,10435,841,1,0,N,N,N,CP_Drtn,TT_Task,DT_FixedDUR2,RV_OK,TK_NotStart,PL01,P/L Spools Fabrication,,832,0,720,0,0,0,720,0,0,0,,,,2012-11-07 08:00,2013-02-24 16:00,,2012-06-30 08:00,2012-10-17 16:00,2012-06-30 08:00,2012-10-17 16:00,2012-06-30 08:00,2012-10-17 16:00,,2012-11-07 08:00,2013-02-24 16:00,,PT_Normal,,,,,HLJPh8QQQuqRB3kePFiOKw,,,,N,0,0,,,2012-06-18 09:56,2012-06-20 10:08,admin,admin,,,
71,82250,772,10437,841,0,0,N,N,N,CP_Drtn,TT_Mile,DT_FixedDrtn,RV_OK,TK_NotStart,LOPS01,Arrival of 01st Shipment Material Barge ( P/L Spools),,0,128,0,0,0,0,0,0,0,0,2012-09-15 08:00,,,2012-09-15 08:00,2012-09-15 08:00,,2012-09-15 08:00,2012-09-15 08:00,2012-09-15 08:00,2012-09-15 08:00,2012-09-15 08:00,2012-09-15 08:00,,2012-09-15 08:00,2012-09-15 08:00,CS_MSO,PT_Normal,,,,,B4Hx/kkxQZKPJEG8DiZMqQ,,,,N,0,0,,,2012-06-18 09:56,2012-06-18 09:56,admin,admin,,,
72,82251,772,10437,841,1,0,N,N,N,CP_Drtn,TT_Task,DT_FixedDUR2,RV_OK,TK_NotStart,LOPS02,1st Shipment Material Barge Preparation,,1088,0,96,0,0,0,96,0,0,0,,,,2013-03-20 08:00,2013-04-02 16:00,,2012-10-03 08:00,2012-10-17 16:00,2012-10-03 08:00,2012-10-17 16:00,2012-10-03 08:00,2012-10-17 16:00,,2013-03-20 08:00,2013-04-02 16:00,,PT_Normal,,,,,ffJmeitJThGKpY3WVSZDNQ,,,,N,0,0,,,2012-06-18 09:56,2012-06-18 09:56,admin,admin,,,
73,82252,772,10437,841,1,0,N,N,N,CP_Drtn,TT_Task,DT_FixedDUR2,RV_OK,TK_NotStart,LOPS03,"L/O & Sea Fastening (P/L Spools 18"""" & 8"""")",,1088,0,32,0,0,0,32,0,0,0,,,,2013-04-03 08:00,2013-04-07 16:00,,2012-10-18 08:00,2012-10-22 16:00,2012-10-18 08:00,2012-10-22 16:00,2012-10-18 08:00,2012-10-22 16:00,,2013-04-03 08:00,2013-04-07 16:00,,PT_Normal,,,,,0IwOiWOuTGWgp9eZJV76QQ,,,,N,0,0,,,2012-06-18 09:56,2012-06-18 09:56,admin,admin,,,
74,82253,772,10438,841,0,0,N,N,N,CP_Drtn,TT_Mile,DT_FixedDrtn,RV_OK,TK_NotStart,LOJK01,Arrival of 02nd Shipment Material Barge ( Jacket and Piles ),,0,263.983333,0,0,0,0,0,0,0,0,2012-12-01 08:01,,,2012-12-01 08:01,2012-12-01 08:01,,2012-12-01 08:01,2012-12-01 08:01,2012-12-01 08:01,2012-12-01 08:01,2012-12-01 08:01,2012-12-01 08:01,,2012-12-01 08:01,2012-12-01 08:01,CS_MSO,PT_Normal,,,,,TZSnzFwbTP2WYUW5WMHAXA,,,,N,0,0,,,2012-06-18 09:56,2012-06-20 10:08,admin,admin,,,
75,82254,772,10438,841,1,0,N,N,N,CP_Drtn,TT_Task,DT_FixedDUR2,RV_OK,TK_NotStart,LOJK02,02nd Shipment Material Barge Preparation,,208,0,96,0,0,0,96,0,0,0,,,,2013-02-11 08:00,2013-02-24 16:00,,2013-01-09 08:00,2013-01-22 16:00,2013-01-09 08:00,2013-01-22 16:00,2013-01-09 08:00,2013-01-22 16:00,,2013-02-11 08:00,2013-02-24 16:00,,PT_Normal,,,,,XbtAi6jCTDyBXVHSpw5OSQ,,,,N,0,0,,,2012-06-18 09:56,2012-06-20 10:08,admin,admin,,,
76,82255,772,10438,841,1,0,N,N,N,CP_Drtn,TT_Task,DT_FixedDUR2,RV_OK,TK_NotStart,LOJK03,L/O & Sea fastening ( Jacket & Piles ),,208,0,56,0,0,0,56,0,0,0,,,,2013-02-25 08:00,2013-03-04 16:00,,2013-01-23 08:00,2013-01-31 16:00,2013-01-23 08:00,2013-01-31 16:00,2013-01-23 08:00,2013-01-31 16:00,,2013-02-25 08:00,2013-03-04 16:00,,PT_Normal,,,,,0h5qrf7kSZW3DGU5wFjrDw,,,,N,0,0,,,2012-06-18 09:56,2012-06-20 10:08,admin,admin,,,
77,82256,772,10439,841,0,0,N,N,N,CP_Drtn,TT_Mile,DT_FixedDrtn,RV_OK,TK_NotStart,LODK01,Arrival of 03rd Shipment Material Barge ( Deck C/W TSF ),,-0.016667,104,0,0,0,0,0,0,0,0,2013-03-01 08:01,,,2013-02-28 15:59,2013-02-28 15:59,,2013-03-02 08:00,2013-03-02 08:00,2013-03-02 08:00,2013-03-02 08:00,2013-03-02 08:00,2013-03-02 08:00,,2013-02-28 15:59,2013-02-28 15:59,CS_MSO,PT_Normal,,,,,ExIEDAbgRLSmFck0X+OxYg,,,,N,0,0,,,2012-06-18 09:56,2012-06-20 10:08,admin,admin,,,
78,82257,772,10439,841,1,0,N,N,N,CP_Drtn,TT_Task,DT_FixedDUR2,RV_OK,TK_NotStart,LODK02,3rd Shipment Material Barge Preparation,,0,0,96,0,0,0,96,0,0,0,,,,2013-03-17 08:00,2013-03-30 16:00,,2013-03-17 08:00,2013-03-30 16:00,2013-03-17 08:00,2013-03-30 16:00,2013-03-17 08:00,2013-03-30 16:00,,2013-03-17 08:00,2013-03-30 16:00,,PT_Normal,,,,,lPDdUYuUTIydlmlcan93BQ,Z6hgNBy73kGKLbXx2xhiTA,,,Y,0,0,,,2012-06-18 09:56,2012-06-20 10:09,admin,admin,,,
79,82258,772,10439,841,1,0,N,N,N,CP_Drtn,TT_Task,DT_FixedDUR2,RV_OK,TK_NotStart,LODK03,L/O & Sea fastening ( Deck),,0,0,56,0,0,0,56,0,0,0,,,,2013-03-31 08:00,2013-04-07 16:00,,2013-03-31 08:00,2013-04-07 16:00,2013-03-31 08:00,2013-04-07 16:00,2013-03-31 08:00,2013-04-07 16:00,,2013-03-31 08:00,2013-04-07 16:00,,PT_Normal,,,,,a29m8wZtSbmmAh/FPoIQAw,,,,Y,0,0,,,2012-06-18 09:56,2012-06-20 10:09,admin,admin,,,
80,83145,773,10440,849,1,0,N,N,N,CP_Drtn,TT_Task,DT_FixedDUR2,RV_OK,TK_NotStart,PMS00,Preinstallation survey,,0,0,40,0,0,0,40,0,0,0,,,,2013-02-25 08:00,2013-03-03 16:00,,2013-02-25 08:00,2013-03-03 16:00,2013-02-25 08:00,2013-03-03 16:00,2013-02-25 08:00,2013-03-03 16:00,,2013-02-25 08:00,2013-03-03 16:00,,PT_Normal,,,,,emZCp5mDY0miaZYzkIPauQ,,,,Y,0,0,,,2012-06-20 08:25,2012-06-20 10:09,admin,admin,,,
81,83162,772,10420,794,1,0,N,N,N,CP_Drtn,TT_Task,DT_FixedDrtn,RV_OK,TK_NotStart,PRP12,"Pipeline 8"""" & Fittings",,-0.016667,2087,408,0,0,0,408,0,0,0,2012-05-30 17:00,,,2012-05-30 16:59,2012-07-20 16:59,,2012-05-31 08:00,2012-07-20 17:00,2012-05-31 08:00,2012-07-20 17:00,2012-05-31 08:00,2012-07-20 17:00,,2012-05-30 16:59,2012-07-20 16:59,CS_MSO,PT_Normal,,,,,tjm2mx2cUUyxd/Z8deMfQA,Z/LKROCTRSGDBSNh6tw23g,,,N,0,0,,,2012-06-20 10:06,2012-06-20 10:08,admin,admin,,,
82,83163,772,10410,841,0,0,N,N,N,CP_Drtn,TT_FinMile,DT_FixedDrtn,RV_OK,TK_NotStart,GM11,Reciving Fax of Award,,-0.016667,0,0,0,0,0,0,0,0,0,2012-01-20 16:00,,,2012-01-19 16:00,2012-01-19 16:00,,2012-01-21 08:01,2012-01-21 08:01,2012-01-21 08:01,2012-01-21 08:01,2012-01-21 08:01,2012-01-21 08:01,,2012-01-19 16:00,2012-01-19 16:00,CS_MEO,PT_Normal,,,,,QntCRO6hKk2dGYdaC4jC+A,mAYBql7WQzuUeAh5RGjavw,,,N,0,0,,,2012-06-20 10:12,2012-06-20 10:12,admin,admin,,,
83,83164,772,10410,841,0,0,N,N,N,CP_Drtn,TT_Mile,DT_FixedDrtn,RV_OK,TK_NotStart,GM12,Project Fab. Start,,1951.983333,1952,0,0,0,0,0,0,0,0,,,,2013-04-07 15:59,2013-04-07 15:59,,2012-06-13 08:00,2012-06-13 08:00,2012-06-13 08:00,2012-06-13 08:00,2012-06-13 08:00,2012-06-13 08:00,,2013-04-07 15:59,2013-04-07 15:59,,PT_Normal,,,,,BLyTuTslCE6HWg/1RLrlRA,MUGR7HsxSCatq1Lsy+yI2A,,,N,0,0,,,2012-06-20 10:12,2012-06-20 10:12,admin,admin,,,
84,83165,772,10410,841,0,0,N,N,N,CP_Drtn,TT_Mile,DT_FixedDrtn,RV_OK,TK_NotStart,GM14,Ready for Load out ( 02nd Shipment/ Jacket & Piles ),,208,208,0,0,0,0,0,0,0,0,,,,2013-02-25 08:00,2013-02-25 08:00,,2013-01-23 08:00,2013-01-23 08:00,2013-01-23 08:00,2013-01-23 08:00,2013-01-23 08:00,2013-01-23 08:00,,2013-02-25 08:00,2013-02-25 08:00,,PT_Normal,,,,,gFZONbWIK0C+nNXjlIz6uQ,oEdGu9OnQ0CgAkVlSv8iuw,,,N,0,0,,,2012-06-20 10:12,2012-06-20 10:12,admin,admin,,,
85,83166,772,10410,841,0,0,N,N,N,CP_Drtn,TT_Mile,DT_FixedDrtn,RV_OK,TK_NotStart,GM15,Ready for Load out ( 03rd Shipment/ Deck C/W TSF ),,55.983333,56,0,0,0,0,0,0,0,0,,,,2013-04-07 15:59,2013-04-07 15:59,,2013-03-31 08:00,2013-03-31 08:00,2013-03-31 08:00,2013-03-31 08:00,2013-03-31 08:00,2013-03-31 08:00,,2013-04-07 15:59,2013-04-07 15:59,,PT_Normal,,,,,9s2ympvYOEiZvw5ljG+Kxw,h7hpizZeQXG79P6YGic48A,,,N,0,0,,,2012-06-20 10:12,2012-06-20 10:12,admin,admin,,,
86,83167,772,10410,841,0,0,N,N,N,CP_Drtn,TT_Mile,DT_FixedDrtn,RV_OK,TK_NotStart,GM13,"Ready for Load out (01st Shipment / Pipeline Spools 18"""" & 8"""")",,1119.983333,1120,0,0,0,0,0,0,0,0,,,,2013-04-07 15:59,2013-04-07 15:59,,2012-10-18 08:00,2012-10-18 08:00,2012-10-18 08:00,2012-10-18 08:00,2012-10-18 08:00,2012-10-18 08:00,,2013-04-07 15:59,2013-04-07 15:59,,PT_Normal,,,,,6hkgSxtQukaozXDsVGKVjA,hwMqvqcnTaWjHD3UCB8GZQ,,,N,0,0,,,2012-06-20 10:12,2012-06-20 10:12,admin,admin,,,
87,83168,772,10412,794,1,0,N,N,N,CP_Drtn,TT_Task,DT_FixedDrtn,RV_OK,TK_NotStart,ENS13,Receiving Jacket Primary & Secondary Steel IFC DWG`s,,0,0,1104,0,0,0,1104,0,0,0,2011-11-30 08:01,,,2011-11-30 08:01,2012-04-16 08:01,,2011-11-30 08:01,2012-04-16 08:01,2011-11-30 08:01,2012-04-16 08:01,2011-11-30 08:01,2012-04-16 08:01,,2011-11-30 08:01,2012-04-16 08:01,CS_MSO,PT_Normal,,,,,fQn8/D6rEUSlwSy++aYoQA,/taVGz7GStKxIdbmdm3JkA,,,N,0,0,,,2012-06-20 10:12,2012-06-20 10:12,admin,admin,,,
88,83169,772,10412,794,0,0,N,N,N,CP_Drtn,TT_FinMile,DT_FixedDrtn,RV_OK,TK_NotStart,ENS14,Receiving Piles IFC DWG`s,,0,720,0,0,0,0,0,0,0,0,2012-01-17 08:01,,,2012-01-17 08:01,2012-01-17 08:01,,2012-01-17 08:01,2012-01-17 08:01,2012-01-17 08:01,2012-01-17 08:01,2012-01-17 08:01,2012-01-17 08:01,,2012-01-17 08:01,2012-01-17 08:01,CS_MEO,PT_Normal,,,,,585mTWwaOUekmnE83+A1kg,Na3Aup6tShC+yRgy8OADFw,,,N,0,0,,,2012-06-20 10:12,2012-06-20 10:12,admin,admin,,,
89,83170,772,10412,794,1,0,N,N,N,CP_Drtn,TT_Task,DT_FixedDUR2,RV_OK,TK_NotStart,ENS15,Receiving Deck Str. Primary & Secondary IFC DWG`s,,0,224,328,0,0,0,328,0,0,0,2012-02-07 08:01,,,2012-02-07 08:01,2012-03-19 08:01,,2012-02-07 08:01,2012-03-19 08:01,2012-02-07 08:01,2012-03-19 08:01,2012-02-07 08:01,2012-03-19 08:01,,2012-02-07 08:01,2012-03-19 08:01,CS_MSO,PT_Normal,,,,,vDJwuFiedked97VMopq//w,fi7weAl5SEGTR2lLUeKx/w,,,N,0,0,,,2012-06-20 10:12,2012-06-20 10:12,admin,admin,,,
90,83171,772,10412,794,0,0,N,N,N,CP_Drtn,TT_FinMile,DT_FixedDrtn,RV_OK,TK_NotStart,ENS11,"Receiving Final Jacket , Boat Land & Piles MTO",,135.983333,135.983333,0,0,0,0,0,0,0,0,,,,2012-02-14 17:00,2012-02-14 17:00,,2012-01-29 08:01,2012-01-29 08:01,2012-01-29 08:01,2012-01-29 08:01,2012-01-29 08:01,2012-01-29 08:01,,2012-02-14 17:00,2012-02-14 17:00,,PT_Normal,,,,,hfJ8sj6Ai02DimJPwXbdQw,TPEjRmwKRrq6hsy6oKat/g,,,N,0,0,,,2012-06-20 10:12,2012-06-20 10:12,admin,admin,,,
91,83172,772,10412,794,0,0,N,N,N,CP_Drtn,TT_FinMile,DT_FixedDrtn,RV_OK,TK_NotStart,ENS12,Receiving Final Deck Str. MTO,,135.983333,135.983333,0,0,0,0,0,0,0,0,,,,2012-02-14 17:00,2012-02-14 17:00,,2012-01-29 08:01,2012-01-29 08:01,2012-01-29 08:01,2012-01-29 08:01,2012-01-29 08:01,2012-01-29 08:01,,2012-02-14 17:00,2012-02-14 17:00,,PT_Normal,,,,,0X6GOG/si0W/k3axqY1amw,6nkSfB2oQqWjhNUPP6KgpA,,,N,0,0,,,2012-06-20 10:12,2012-06-20 10:12,admin,admin,,,
92,83173,772,10412,794,1,0,N,N,N,CP_Drtn,TT_Task,DT_FixedDrtn,RV_OK,TK_NotStart,ENS18,Receiving IFC Equipment fixation DWG`s,,0,1559.983333,104,0,0,0,104,0,0,0,2012-04-04 08:01,,,2012-04-04 08:01,2012-04-17 08:01,,2012-04-04 08:01,2012-04-17 08:01,2012-04-04 08:01,2012-04-17 08:01,2012-04-04 08:01,2012-04-17 08:01,,2012-04-04 08:01,2012-04-17 08:01,CS_MSO,PT_Normal,,,,,IwC8dusvkkeoGNbz2wydyg,mm1mBipHSJKSJiX6ECgsuA,,,N,0,0,,,2012-06-20 10:12,2012-06-20 10:12,admin,admin,,,
93,83174,772,10412,794,1,0,N,N,N,CP_Drtn,TT_Task,DT_FixedDUR2,RV_OK,TK_NotStart,ENS16,Receiving Piping Supports IFC DWG's,,0,3078.983333,160,0,0,0,160,0,0,0,2012-02-28 08:01,,,2012-02-28 08:01,2012-03-19 08:01,,2012-02-28 08:01,2012-03-19 08:01,2012-02-28 08:01,2012-03-19 08:01,2012-02-28 08:01,2012-03-19 08:01,,2012-02-28 08:01,2012-03-19 08:01,CS_MSO,PT_Normal,,,,,fwqWJuI73UKeEIb3GJFIaA,00Owhd0XR8uvJLKhPzMELA,,,N,0,0,,,2012-06-20 10:12,2012-06-20 10:12,admin,admin,,,
94,83175,772,10412,794,1,0,N,N,N,CP_Drtn,TT_Task,DT_FixedDUR2,RV_OK,TK_NotStart,ENS17,Receiving Cable tarys Support IFC DWG's,,0,3022.983333,104,0,0,0,104,0,0,0,2012-03-13 08:01,,,2012-03-13 08:01,2012-03-26 08:01,,2012-03-13 08:01,2012-03-26 08:01,2012-03-13 08:01,2012-03-26 08:01,2012-03-13 08:01,2012-03-26 08:01,,2012-03-13 08:01,2012-03-26 08:01,CS_MSO,PT_Normal,,,,,uubwd56Wz0KTSuLtYlidjg,JPgGdggzREiAYSQ7vnqU2w,,,N,0,0,,,2012-06-20 10:12,2012-06-20 10:12,admin,admin,,,
95,83176,772,10412,794,1,0,N,N,N,CP_Drtn,TT_Task,DT_FixedDrtn,RV_OK,TK_NotStart,ENS19,"Receiving P/L 8"""" & 18"""" IFC DWG's",,0,2736,160,0,0,0,160,0,0,0,2012-04-10 16:00,,,2012-04-10 16:00,2012-04-30 16:00,,2012-04-10 16:00,2012-04-30 16:00,2012-04-10 16:00,2012-04-30 16:00,2012-04-10 16:00,2012-04-30 16:00,,2012-04-10 16:00,2012-04-30 16:00,CS_MSO,PT_Normal,,,,,oIVfzDIEhEGkQBAOSFzBdQ,98Xxuu9fQZixtpBjPwMmlQ,,,N,0,0,,,2012-06-20 10:12,2012-06-20 10:12,admin,admin,,,
96,83177,772,10413,794,1,0,N,N,N,CP_Drtn,TT_Task,DT_FixedDrtn,RV_OK,TK_NotStart,ENT13,Receiving Piping ISO`s IFC DWG's,,0,1047.983333,112,0,0,0,112,0,0,0,2012-02-27 08:01,,,2012-02-27 08:01,2012-03-12 08:01,,2012-02-27 08:01,2012-03-12 08:01,2012-02-27 08:01,2012-03-12 08:01,2012-02-27 08:01,2012-03-12 08:01,,2012-02-27 08:01,2012-03-12 08:01,CS_MSO,PT_Normal,,,,,EbAV7O3+0UWzxWiIdkWuwA,enOOp99+SsqEvqB5hnSgoA,,,N,0,0,,,2012-06-20 10:12,2012-06-20 10:12,admin,admin,,,
97,83178,772,10413,794,0,0,N,N,N,CP_Drtn,TT_FinMile,DT_FixedDrtn,RV_OK,TK_NotStart,ENT11,Issue Approved P&ID's / Equipment List IFC DWG's,,0,3584,0,0,0,0,0,0,0,0,2012-01-15 16:00,,,2012-01-15 16:00,2012-01-15 16:00,,2012-01-15 16:00,2012-01-15 16:00,2012-01-15 16:00,2012-01-15 16:00,2012-01-15 16:00,2012-01-15 16:00,,2012-01-15 16:00,2012-01-15 16:00,CS_MEO,PT_Normal,,,,,aW4hUSQwQkyC6xUGkTqBNw,93sGNlW6QoCv/1ksHG2NzA,,,N,0,0,,,2012-06-20 10:12,2012-06-20 10:12,admin,admin,,,
98,83179,772,10413,794,0,0,N,N,N,CP_Drtn,TT_FinMile,DT_FixedDrtn,RV_OK,TK_NotStart,ENT12,Issue plat plans IFC DWG's,,0,3408,0,0,0,0,0,0,0,0,2012-02-06 16:00,,,2012-02-06 16:00,2012-02-06 16:00,,2012-02-06 16:00,2012-02-06 16:00,2012-02-06 16:00,2012-02-06 16:00,2012-02-06 16:00,2012-02-06 16:00,,2012-02-06 16:00,2012-02-06 16:00,CS_MEO,PT_Normal,,,,,BK+nLP810UCbJMC0LPk30g,FmX28kBFQpGSXexVmL7Wlw,,,N,0,0,,,2012-06-20 10:12,2012-06-20 10:12,admin,admin,,,
99,83180,772,10413,841,0,0,N,N,N,CP_Drtn,TT_FinMile,DT_FixedDrtn,RV_OK,TK_NotStart,ENT14,Issue Hydrotest maps & loops IFC DWG's,,0,2648,0,0,0,0,0,0,0,0,2012-02-28 16:00,,,2012-02-28 16:00,2012-02-28 16:00,,2012-02-28 16:00,2012-02-28 16:00,2012-02-28 16:00,2012-02-28 16:00,2012-02-28 16:00,2012-02-28 16:00,,2012-02-28 16:00,2012-02-28 16:00,CS_MEO,PT_Normal,,,,,fHwgfAMtLECZ5IJXBmoKbw,5DGNq1VSTqKaHuj3eSEIjw,,,N,0,0,,,2012-06-20 10:12,2012-06-20 10:12,admin,admin,,,
100,83181,772,10414,794,1,0,N,N,N,CP_Drtn,TT_Task,DT_FixedDUR2,RV_OK,TK_NotStart,ENE11,Receiving E&I IFC DWG`s,,0,2279.983333,776,0,0,0,776,0,0,0,2012-01-23 08:01,,,2012-01-23 08:01,2012-04-29 08:01,,2012-01-23 08:01,2012-04-29 08:01,2012-01-23 08:01,2012-04-29 08:01,2012-01-23 08:01,2012-04-29 08:01,,2012-01-23 08:01,2012-04-29 08:01,CS_MSO,PT_Normal,,,,,PBmCenI7YEKLp6iD84Cr7Q,3Z6l8wXrS6642p/eM8yB1A,,,N,0,0,,,2012-06-20 10:12,2012-06-20 10:12,admin,admin,,,
101,83182,772,10415,841,1,0,N,N,N,CP_Drtn,TT_Task,DT_FixedDUR2,RV_OK,TK_NotStart,PF11,Pre-Fabrication of Steel Structure ( Jacket & Piles),,208,0,960,0,0,0,960,0,0,0,,,,2012-07-14 08:00,2012-12-10 16:00,,2012-06-13 08:00,2012-11-08 16:00,2012-06-13 08:00,2012-11-08 16:00,2012-06-13 08:00,2012-11-08 16:00,,2012-07-14 08:00,2012-12-10 16:00,,PT_Normal,,,,,BXGh6gKxm0iB+B+N2Cm2ag,BUUxQXUKQcKvFYRqrGtbRg,,,N,0,0,,,2012-06-20 10:12,2012-06-20 10:12,admin,admin,,,
102,83183,772,10417,794,1,0,N,N,N,CP_Drtn,TT_Task,DT_FixedDUR2,RV_OK,TK_NotStart,PRT21,Piping Bulk material 1st batch,,-0.016667,536,240,0,0,0,240,0,0,0,2012-05-07 17:00,,,2012-05-07 16:59,2012-06-06 16:59,,2012-05-08 08:00,2012-06-06 17:00,2012-05-08 08:00,2012-06-06 17:00,2012-05-08 08:00,2012-06-06 17:00,,2012-05-07 16:59,2012-06-06 16:59,CS_MSO,PT_Normal,,,,,mlVZd8jlMk6fm6lMahemSA,DqLN36xRQY+kZsfpyGsU9w,,,N,0,0,,,2012-06-20 10:12,2012-06-20 10:12,admin,admin,,,
103,83184,772,10417,794,1,0,N,N,N,CP_Drtn,TT_Task,DT_FixedDUR2,RV_OK,TK_NotStart,PRT22,Piping Bulk material 2nd batch,,-0.016667,855,240,0,0,0,240,0,0,0,2012-06-10 17:00,,,2012-06-10 16:59,2012-07-10 16:59,,2012-06-11 08:00,2012-07-10 17:00,2012-06-11 08:00,2012-07-10 17:00,2012-06-11 08:00,2012-07-10 17:00,,2012-06-10 16:59,2012-07-10 16:59,CS_MSO,PT_Normal,,,,,XSjOeWLmc0Suy1GGlTLASQ,fRmh57i3SamJM0o1p2/3vA,,,N,0,0,,,2012-06-20 10:12,2012-06-20 10:12,admin,admin,,,
104,83185,772,10417,794,1,0,N,N,N,CP_Drtn,TT_Task,DT_FixedDUR2,RV_OK,TK_NotStart,PRT13,Piping Valves Bulk material 1st batch,,-0.016667,999,112,0,0,0,112,0,0,0,2012-06-23 17:00,,,2012-06-23 16:59,2012-07-07 16:59,,2012-06-24 08:00,2012-07-07 17:00,2012-06-24 08:00,2012-07-07 17:00,2012-06-24 08:00,2012-07-07 17:00,,2012-06-23 16:59,2012-07-07 16:59,CS_MSO,PT_Normal,,,,,mQTrdmlAckeihDmyjty0yw,7wg9/w/MQ7a7zI20+pTM+A,,,N,0,0,,,2012-06-20 10:12,2012-06-20 10:12,admin,admin,,,
105,83186,772,10417,794,1,0,N,N,N,CP_Drtn,TT_Task,DT_FixedDUR2,RV_OK,TK_NotStart,PRT14,Piping valves Bulk material 2nd batch,,-0.016667,767,112,0,0,0,112,0,0,0,2012-07-22 17:00,,,2012-07-22 16:59,2012-08-05 16:59,,2012-07-23 08:00,2012-08-05 17:00,2012-07-23 08:00,2012-08-05 17:00,2012-07-23 08:00,2012-08-05 17:00,,2012-07-22 16:59,2012-08-05 16:59,CS_MSO,PT_Normal,,,,,XYLgLhVz1EisgV8ctlneGw,iGFfO+XNTpqt+16+eOx2EA,,,N,0,0,,,2012-06-20 10:12,2012-06-20 10:12,admin,admin,,,
106,83187,772,10417,794,1,0,N,N,N,CP_Drtn,TT_Task,DT_FixedDUR2,RV_OK,TK_NotStart,PRT15,Flanges,,-0.016667,8,360,0,0,0,360,0,0,0,2012-07-13 17:00,,,2012-07-13 16:59,2012-08-27 16:59,,2012-07-14 08:00,2012-08-27 17:00,2012-07-14 08:00,2012-08-27 17:00,2012-07-14 08:00,2012-08-27 17:00,,2012-07-13 16:59,2012-08-27 16:59,CS_MSO,PT_Normal,,,,,ynw/2kVsJUCQTiDjWuiUKg,VAq1SSMERrmj1gqIqoQiTg,,,N,0,0,,,2012-06-20 10:12,2012-06-20 10:12,admin,admin,,,
107,83188,772,10417,794,1,0,N,N,N,CP_Drtn,TT_Task,DT_FixedDUR2,RV_OK,TK_NotStart,PRT16,Pressure Safety Valve,,-0.016667,1519,352,0,0,0,352,0,0,0,2012-06-04 17:00,,,2012-06-04 16:59,2012-07-18 16:59,,2012-06-05 08:00,2012-07-18 17:00,2012-06-05 08:00,2012-07-18 17:00,2012-06-05 08:00,2012-07-18 17:00,,2012-06-04 16:59,2012-07-18 16:59,CS_MSO,PT_Normal,,,,,FmcfYmS0CkqRp6Gvxanm2A,+SvOOjbVT6SM2f4LWOHEpg,,,N,0,0,,,2012-06-20 10:12,2012-06-20 10:12,admin,admin,,,
108,83189,772,10417,794,1,0,N,N,N,CP_Drtn,TT_Task,DT_FixedDUR2,RV_OK,TK_NotStart,PRT17,Pressure regulator Valve,,-0.016667,1231,240,0,0,0,240,0,0,0,2012-07-24 17:00,,,2012-07-24 16:59,2012-08-23 16:59,,2012-07-25 08:00,2012-08-23 17:00,2012-07-25 08:00,2012-08-23 17:00,2012-07-25 08:00,2012-08-23 17:00,,2012-07-24 16:59,2012-08-23 16:59,CS_MSO,PT_Normal,,,,,MUMBakw88UCMBwfosGhvtA,FkVucARhQlCiyikicegBhQ,,,N,0,0,,,2012-06-20 10:12,2012-06-20 10:12,admin,admin,,,
109,83190,772,10417,794,1,0,N,N,N,CP_Drtn,TT_Task,DT_FixedDUR2,RV_OK,TK_NotStart,PRT18,Shutdown Valve,,-0.016667,1135,248,0,0,0,248,0,0,0,2012-08-04 17:00,,,2012-08-04 16:59,2012-09-04 16:59,,2012-08-05 08:00,2012-09-04 17:00,2012-08-05 08:00,2012-09-04 17:00,2012-08-05 08:00,2012-09-04 17:00,,2012-08-04 16:59,2012-09-04 16:59,CS_MSO,PT_Normal,,,,,3HVeZrPw+kua3HhPYoeooQ,GViNUzKNR0i8XYjXx02J5Q,,,N,0,0,,,2012-06-20 10:12,2012-06-20 10:12,admin,admin,,,
110,83191,772,10418,794,1,0,N,N,N,CP_Drtn,TT_Task,DT_FixedDUR2,RV_OK,TK_NotStart,PRT19,Chemical Injection PKG.,,-0.016667,1264,360,0,0,0,360,0,0,0,2012-05-08 17:00,,,2012-05-08 16:59,2012-06-22 16:59,,2012-05-09 08:00,2012-06-22 17:00,2012-05-09 08:00,2012-06-22 17:00,2012-05-09 08:00,2012-06-22 17:00,,2012-05-08 16:59,2012-06-22 16:59,CS_MSO,PT_Normal,,,,,atgCRGby9EyY4hjcV3KVMw,eKvs6VRWSyOb6HNtkF9+AA,,,N,0,0,,,2012-06-20 10:12,2012-06-20 10:12,admin,admin,,,
111,83192,772,10418,794,1,0,N,N,N,CP_Drtn,TT_Task,DT_FixedDUR2,RV_OK,TK_NotStart,PRT20,Launcher recivier,,-0.016667,960,360,0,0,0,360,0,0,0,2012-06-15 17:00,,,2012-06-15 16:59,2012-07-30 16:59,,2012-06-16 08:00,2012-07-30 17:00,2012-06-16 08:00,2012-07-30 17:00,2012-06-16 08:00,2012-07-30 17:00,,2012-06-15 16:59,2012-07-30 16:59,CS_MSO,PT_Normal,,,,,EKOmDBP6cEq6EOVl5NB3WA,3IwzhhfhR3KgxUsvdJ6rqQ,,,N,0,0,,,2012-06-20 10:12,2012-06-20 10:12,admin,admin,,,
112,83193,772,10418,794,1,0,N,N,N,CP_Drtn,TT_Task,DT_FixedDUR2,RV_OK,TK_NotStart,PRT31,Vent KOD,,-0.016667,864,360,0,0,0,360,0,0,0,2012-06-27 17:00,,,2012-06-27 16:59,2012-08-11 16:59,,2012-06-28 08:00,2012-08-11 17:00,2012-06-28 08:00,2012-08-11 17:00,2012-06-28 08:00,2012-08-11 17:00,,2012-06-27 16:59,2012-08-11 16:59,CS_MSO,PT_Normal,,,,,rf+Er5qWCU2Vl8wE317jGQ,V+De5pWvTHyHzJo6bSHRww,,,N,0,0,,,2012-06-20 10:12,2012-06-20 10:12,admin,admin,,,
113,83194,772,10418,794,1,0,N,N,N,CP_Drtn,TT_Task,DT_FixedDUR2,RV_OK,TK_NotStart,PRT32,Open Drain Tank,,-0.016667,624,360,0,0,0,360,0,0,0,2012-06-27 17:00,,,2012-06-27 16:59,2012-08-11 16:59,,2012-06-28 08:00,2012-08-11 17:00,2012-06-28 08:00,2012-08-11 17:00,2012-06-28 08:00,2012-08-11 17:00,,2012-06-27 16:59,2012-08-11 16:59,CS_MSO,PT_Normal,,,,,QEatGDsWyEC05CbcxV4PSA,Dvo6DiXYTvSm95/lOoAUnw,,,N,0,0,,,2012-06-20 10:12,2012-06-20 10:12,admin,admin,,,
114,83195,772,10419,794,1,0,N,N,N,CP_Drtn,TT_Task,DT_FixedDUR2,RV_OK,TK_NotStart,PRS13,Delivery of Structure Material (F.O.B - 13 Wks.) - (Gupco Responsability),,0,0,728,0,0,0,728,0,0,0,,,,2012-02-15 08:00,2012-05-15 17:00,,2012-02-15 08:00,2012-05-15 17:00,2012-02-15 08:00,2012-05-15 17:00,2012-02-15 08:00,2012-05-15 17:00,,2012-02-15 08:00,2012-05-15 17:00,,PT_Normal,,,,,ufROFkTcoEuCgCWoyMhxDg,dmjGd5dtRyGQN7eIgjvWtA,,,Y,0,0,,,2012-06-20 10:12,2012-06-20 10:12,admin,admin,,,
115,83196,772,10419,794,1,0,N,N,N,CP_Drtn,TT_Task,DT_FixedDUR2,RV_OK,TK_NotStart,PRS15,Material check with IFC DWG's to Prepare balance material,,1566.983333,0,56,0,0,0,56,0,0,0,,,,2012-10-28 16:00,2012-11-04 16:00,,2012-04-16 08:01,2012-04-23 08:01,2012-04-16 08:01,2012-04-23 08:01,2012-04-16 08:01,2012-04-23 08:01,,2012-10-28 16:00,2012-11-04 16:00,,PT_Normal,,,,,WHf9ahQtqU2p9l32LH4nFg,TiJCnNvxQjGqD/lEVDLgtw,,,N,0,0,,,2012-06-20 10:12,2012-06-20 10:12,admin,admin,,,
116,83197,772,10419,794,1,0,N,N,N,CP_Drtn,TT_Task,DT_FixedDUR2,RV_OK,TK_NotStart,PRS16,Delivery of balance material,,1566.983333,1566.983333,1232,0,0,0,1232,0,0,0,,,,2012-11-04 16:00,2013-04-07 16:00,,2012-04-23 08:01,2012-09-24 08:01,2012-04-23 08:01,2012-09-24 08:01,2012-04-23 08:01,2012-09-24 08:01,,2012-11-04 16:00,2013-04-07 16:00,,PT_Normal,,,,,qqmATIO3T0mle0HolK/t5g,oU6FnPOSQS+kCV/HY5y5yA,,,N,0,0,,,2012-06-20 10:12,2012-06-20 10:12,admin,admin,,,
117,83198,772,10419,794,0,0,N,N,N,CP_Drtn,TT_Mile,DT_FixedDrtn,RV_OK,TK_NotStart,PRS11,Issue Structural Material P.O's ( Gupco Responsability),,0,64,0,0,0,0,0,0,0,0,2012-02-07 08:00,,,2012-02-07 08:00,2012-02-07 08:00,,2012-02-07 08:00,2012-02-07 08:00,2012-02-07 08:00,2012-02-07 08:00,2012-02-07 08:00,2012-02-07 08:00,,2012-02-07 08:00,2012-02-07 08:00,CS_MSO,PT_Normal,,,,,pHgYmay3DEa6F1CjhdcYlQ,xF9X1iufT72bd1+OFKWOyQ,,,N,0,0,,,2012-06-20 10:12,2012-06-20 10:12,admin,admin,,,
118,83199,772,10419,794,0,0,N,N,N,CP_Drtn,TT_Mile,DT_FixedDrtn,RV_OK,TK_NotStart,PRS12,Issue LC ( Gupco Responsability),,0,0,0,0,0,0,0,0,0,0,2012-02-15 08:00,,,2012-02-15 08:00,2012-02-15 08:00,,2012-02-15 08:00,2012-02-15 08:00,2012-02-15 08:00,2012-02-15 08:00,2012-02-15 08:00,2012-02-15 08:00,,2012-02-15 08:00,2012-02-15 08:00,CS_MSO,PT_Normal,,,,,veFibYaEtEavYsz0ENZ8Xw,um/v71UCSm2K8HwIWZ36mg,,,Y,0,0,,,2012-06-20 10:12,2012-06-20 10:12,admin,admin,,,
119,83200,772,10419,794,1,0,N,N,N,CP_Drtn,TT_Task,DT_FixedDUR2,RV_OK,TK_NotStart,PRS14,Delivery of Structure Material at Site (4 Wks.),,0,0,224,0,0,0,224,0,0,0,,,,2012-05-16 08:00,2012-06-12 17:00,,2012-05-16 08:00,2012-06-12 17:00,2012-05-16 08:00,2012-06-12 17:00,2012-05-16 08:00,2012-06-12 17:00,,2012-05-16 08:00,2012-06-12 17:00,,PT_Normal,,,,,nRJYaZzK+UG2EPxNOD2G8g,FqPfFJhLQ+SL9TfNEDcs7w,,,Y,0,0,,,2012-06-20 10:12,2012-06-20 10:12,admin,admin,,,
120,83201,772,10420,794,1,0,N,N,N,CP_Drtn,TT_Task,DT_FixedDrtn,RV_OK,TK_NotStart,PRP11,"Pipeline 18"""" & Fittings",,0,0,408,0,0,0,408,0,0,0,2012-05-31 08:00,,,2012-05-31 08:00,2012-07-20 17:00,,2012-05-31 08:00,2012-07-20 17:00,2012-05-31 08:00,2012-07-20 17:00,2012-05-31 08:00,2012-07-20 17:00,,2012-05-31 08:00,2012-07-20 17:00,CS_MSO,PT_Normal,,,,,0gQPSnx6fE6L7wIm15puCg,8zKzqtp8RUKmTAsXxykRFA,,,N,0,0,,,2012-06-20 10:12,2012-06-20 10:12,admin,admin,,,
121,83202,772,10420,794,1,0,N,N,N,CP_Drtn,TT_Task,DT_FixedDrtn,RV_OK,TK_NotStart,PRP22,"Pipeline 8"""" & Fittings",,-0.016667,351,408,0,0,0,408,0,0,0,2012-05-30 17:00,,,2012-05-30 16:59,2012-07-20 16:59,,2012-05-31 08:00,2012-07-20 17:00,2012-05-31 08:00,2012-07-20 17:00,2012-05-31 08:00,2012-07-20 17:00,,2012-05-30 16:59,2012-07-20 16:59,CS_MSO,PT_Normal,,,,,AxWyZ9p3n0Oi1nGfbffvUg,Z/LKROCTRSGDBSNh6tw23g,,,N,0,0,,,2012-06-20 10:12,2012-06-20 10:12,admin,admin,,,
122,83203,772,10422,794,1,0,N,N,N,CP_Drtn,TT_Task,DT_FixedDUR2,RV_OK,TK_NotStart,PRE17,Radar system,,-0.016667,904,240,0,0,0,240,0,0,0,2012-06-19 17:00,,,2012-06-19 16:59,2012-07-19 16:59,,2012-06-20 08:00,2012-07-19 17:00,2012-06-20 08:00,2012-07-19 17:00,2012-06-20 08:00,2012-07-19 17:00,,2012-06-19 16:59,2012-07-19 16:59,CS_MSO,PT_Normal,,,,,ZwOgBmKoj0abTWYrf+cpXQ,fN9/pTqqS/2bIA0m5B7Ztw,,,N,0,0,,,2012-06-20 10:12,2012-06-20 10:12,admin,admin,,,
123,83204,772,10422,794,1,0,N,N,N,CP_Drtn,TT_Task,DT_FixedDUR2,RV_OK,TK_NotStart,PRE18,Navegation Aids,,-0.016667,1384,360,0,0,0,360,0,0,0,2012-04-05 17:00,,,2012-04-05 16:59,2012-05-20 16:59,,2012-04-06 08:00,2012-05-20 17:00,2012-04-06 08:00,2012-05-20 17:00,2012-04-06 08:00,2012-05-20 17:00,,2012-04-05 16:59,2012-05-20 16:59,CS_MSO,PT_Normal,,,,,AdPCWeKs9Eu/XKLAjtX/xg,/agS5N51QBGq3ZFFA4yHkQ,,,N,0,0,,,2012-06-20 10:12,2012-06-20 10:12,admin,admin,,,
124,83205,772,10423,794,1,0,N,N,N,CP_Drtn,TT_Task,DT_FixedDUR2,RV_OK,TK_NotStart,PRE21,Electrical Bulks,,-0.016667,512,360,0,0,0,360,0,0,0,2012-07-23 17:00,,,2012-07-23 16:59,2012-09-06 16:59,,2012-07-24 08:00,2012-09-06 17:00,2012-07-24 08:00,2012-09-06 17:00,2012-07-24 08:00,2012-09-06 17:00,,2012-07-23 16:59,2012-09-06 16:59,CS_MSO,PT_Normal,,,,,WXLNpk9sVEuqCcpSKWeHsQ,vQ/i5SbETo6/zhp0lbrKxA,,,N,0,0,,,2012-06-20 10:12,2012-06-20 10:12,admin,admin,,,
125,83206,772,10423,794,1,0,N,N,N,CP_Drtn,TT_Task,DT_FixedDUR2,RV_OK,TK_NotStart,PRE22,Cathodic Protection,,-0.016667,1000,360,0,0,0,360,0,0,0,2012-05-23 17:00,,,2012-05-23 16:59,2012-07-07 16:59,,2012-05-24 08:00,2012-07-07 17:00,2012-05-24 08:00,2012-07-07 17:00,2012-05-24 08:00,2012-07-07 17:00,,2012-05-23 16:59,2012-07-07 16:59,CS_MSO,PT_Normal,,,,,rBAMXE1Xckm5NRjyKElk1A,Iw4lArETRiW8xPu6VxnShg,,,N,0,0,,,2012-06-20 10:12,2012-06-20 10:12,admin,admin,,,
126,83207,772,10423,794,1,0,N,N,N,CP_Drtn,TT_Task,DT_FixedDUR2,RV_OK,TK_NotStart,PRE23,Solar Power,,-0.016667,912,360,0,0,0,360,0,0,0,2012-06-03 17:00,,,2012-06-03 16:59,2012-07-18 16:59,,2012-06-04 08:00,2012-07-18 17:00,2012-06-04 08:00,2012-07-18 17:00,2012-06-04 08:00,2012-07-18 17:00,,2012-06-03 16:59,2012-07-18 16:59,CS_MSO,PT_Normal,,,,,224lD4coJkG9lmldOcMgGw,VN0an5lGRoaFh0fMNvkkFA,,,N,0,0,,,2012-06-20 10:12,2012-06-20 10:12,admin,admin,,,
127,83208,772,10424,794,1,0,N,N,N,CP_Drtn,TT_Task,DT_FixedDUR2,RV_OK,TK_NotStart,PRE14,F&G Detector,,-0.016667,648,360,0,0,0,360,0,0,0,2012-07-06 17:00,,,2012-07-06 16:59,2012-08-20 16:59,,2012-07-07 08:00,2012-08-20 17:00,2012-07-07 08:00,2012-08-20 17:00,2012-07-07 08:00,2012-08-20 17:00,,2012-07-06 16:59,2012-08-20 16:59,CS_MSO,PT_Normal,,,,,GNiZoWepJkyQLU1cno9RoA,VSwOK9yIRUSoxROQDvdw7g,,,N,0,0,,,2012-06-20 10:12,2012-06-20 10:12,admin,admin,,,
128,83209,772,10424,794,1,0,N,N,N,CP_Drtn,TT_Task,DT_FixedDUR2,RV_OK,TK_NotStart,PRE15,Fire fighting system,,-0.016667,720,360,0,0,0,360,0,0,0,2012-06-27 17:00,,,2012-06-27 16:59,2012-08-11 16:59,,2012-06-28 08:00,2012-08-11 17:00,2012-06-28 08:00,2012-08-11 17:00,2012-06-28 08:00,2012-08-11 17:00,,2012-06-27 16:59,2012-08-11 16:59,CS_MSO,PT_Normal,,,,,A2Ms5fr0LkmjeEO9wddbSw,tpzm+A81SOKv9OzobhMGlw,,,N,0,0,,,2012-06-20 10:12,2012-06-20 10:12,admin,admin,,,
129,83210,772,10424,794,1,0,N,N,N,CP_Drtn,TT_Task,DT_FixedDUR2,RV_OK,TK_NotStart,PRE16,Life Saving Equipment,,-0.016667,664,360,0,0,0,360,0,0,0,2012-07-04 17:00,,,2012-07-04 16:59,2012-08-18 16:59,,2012-07-05 08:00,2012-08-18 17:00,2012-07-05 08:00,2012-08-18 17:00,2012-07-05 08:00,2012-08-18 17:00,,2012-07-04 16:59,2012-08-18 16:59,CS_MSO,PT_Normal,,,,,ldIBOpgah0a/lR8E0LDWiA,KFlMp1iuR7Ggn/R36j8DNg,,,N,0,0,,,2012-06-20 10:12,2012-06-20 10:12,admin,admin,,,
130,83211,772,10425,794,1,0,N,N,N,CP_Drtn,TT_Task,DT_FixedDUR2,RV_OK,TK_NotStart,PRE19,Instrument Electical Bulk,,-0.016667,624,240,0,0,0,240,0,0,0,2012-07-24 17:00,,,2012-07-24 16:59,2012-08-23 16:59,,2012-07-25 08:00,2012-08-23 17:00,2012-07-25 08:00,2012-08-23 17:00,2012-07-25 08:00,2012-08-23 17:00,,2012-07-24 16:59,2012-08-23 16:59,CS_MSO,PT_Normal,,,,,ZOlQpD0j6k2Oje25cdeLIw,nbERwAGrT3emToa6M54rSw,,,N,0,0,,,2012-06-20 10:12,2012-06-20 10:12,admin,admin,,,
131,83212,772,10425,794,1,0,N,N,N,CP_Drtn,TT_Task,DT_FixedDUR2,RV_OK,TK_NotStart,PRE20,Instrument Mechanical Bulk,,-0.016667,640,280,0,0,0,280,0,0,0,2012-07-17 17:00,,,2012-07-17 16:59,2012-08-21 16:59,,2012-07-18 08:00,2012-08-21 17:00,2012-07-18 08:00,2012-08-21 17:00,2012-07-18 08:00,2012-08-21 17:00,,2012-07-17 16:59,2012-08-21 16:59,CS_MSO,PT_Normal,,,,,CONbT0M6vUqQSnyT17w0og,I5ckdTYuQTKukOCM1JedFw,,,N,0,0,,,2012-06-20 10:12,2012-06-20 10:12,admin,admin,,,
132,83213,772,10425,794,1,0,N,N,N,CP_Drtn,TT_Task,DT_FixedDUR2,RV_OK,TK_NotStart,PRE31,Field Instrument,,-0.016667,760,360,0,0,0,360,0,0,0,2012-06-22 17:00,,,2012-06-22 16:59,2012-08-06 16:59,,2012-06-23 08:00,2012-08-06 17:00,2012-06-23 08:00,2012-08-06 17:00,2012-06-23 08:00,2012-08-06 17:00,,2012-06-22 16:59,2012-08-06 16:59,CS_MSO,PT_Normal,,,,,w5X6gbh04UW3W5Wq+rSQBg,M/41QxsNRJS7+vZ1Rp7jJg,,,N,0,0,,,2012-06-20 10:12,2012-06-20 10:12,admin,admin,,,
133,83214,772,10425,794,1,0,N,N,N,CP_Drtn,TT_Task,DT_FixedDUR2,RV_OK,TK_NotStart,PRE32,multi phase flow meter,,-0.016667,1095,456,0,0,0,456,0,0,0,2012-07-17 17:00,,,2012-07-17 16:59,2012-09-12 16:59,,2012-07-18 08:00,2012-09-12 17:00,2012-07-18 08:00,2012-09-12 17:00,2012-07-18 08:00,2012-09-12 17:00,,2012-07-17 16:59,2012-09-12 16:59,CS_MSO,PT_Normal,,,,,uuNDwlD4PUKH8xd4UATKSA,VbJvQNUwQvmr5G5TNU296w,,,N,0,0,,,2012-06-20 10:12,2012-06-20 10:12,admin,admin,,,
134,83215,772,10425,794,1,0,N,N,N,CP_Drtn,TT_Task,DT_FixedDUR2,RV_OK,TK_NotStart,PRE33,Safe Guard system,,-0.016667,1063,240,0,0,0,240,0,0,0,2012-08-17 17:00,,,2012-08-17 16:59,2012-09-16 16:59,,2012-08-18 08:00,2012-09-16 17:00,2012-08-18 08:00,2012-09-16 17:00,2012-08-18 08:00,2012-09-16 17:00,,2012-08-17 16:59,2012-09-16 16:59,CS_MSO,PT_Normal,,,,,itaIeWskBUuoh6CM3axILA,jReSS16pSoan6pMZsdEk8g,,,N,0,0,,,2012-06-20 10:12,2012-06-20 10:12,admin,admin,,,
135,83216,772,10427,841,1,0,N,N,N,CP_Drtn,TT_Task,DT_FixedDUR2,RV_OK,TK_NotStart,JK11,"Jacket , Boat Landing Fabrication & Painting",,208,0,1400,0,0,0,1400,0,0,0,,,,2012-07-22 08:00,2013-02-24 16:00,,2012-06-21 08:00,2013-01-22 16:00,2012-06-21 08:00,2013-01-22 16:00,2012-06-21 08:00,2013-01-22 16:00,,2012-07-22 08:00,2013-02-24 16:00,,PT_Normal,,,,,zGKHlJO9h0ufFBInYTxRrA,MJjexNjLRy6cxfkloFqepA,,,N,0,0,,,2012-06-20 10:12,2012-06-20 10:12,admin,admin,,,
136,83217,772,10427,841,1,0,N,N,N,CP_Drtn,TT_Task,DT_FixedDUR2,RV_OK,TK_NotStart,JK12,Piles Fabrication & Marking,,592,592,1000,0,0,0,1000,0,0,0,,,,2012-11-08 08:00,2013-04-07 16:00,,2012-08-06 08:00,2013-01-08 16:00,2012-08-06 08:00,2013-01-08 16:00,2012-08-06 08:00,2013-01-08 16:00,,2012-11-08 08:00,2013-04-07 16:00,,PT_Normal,,,,,8yP1p3vGb0C5fjxlQvUcfw,cmwt03k5QUWVZ2X2eta6kg,,,N,0,0,,,2012-06-20 10:12,2012-06-20 10:12,admin,admin,,,
137,83218,772,10429,841,1,0,N,N,N,CP_Drtn,TT_Task,DT_FixedDUR2,RV_OK,TK_NotStart,DS011,Fabrication and Painting of Below Production Deck/Legs,,0,0,840,0,0,0,840,0,0,0,,,,2012-06-13 08:00,2012-10-18 16:00,,2012-06-13 08:00,2012-10-18 16:00,2012-06-13 08:00,2012-10-18 16:00,2012-06-13 08:00,2012-10-18 16:00,,2012-06-13 08:00,2012-10-18 16:00,,PT_Normal,,,,,h/MVry+KeEKwqKSfSZZSbA,YDhnGt4WSampcAcCK/B2gQ,,,Y,0,0,,,2012-06-20 10:12,2012-06-20 10:12,admin,admin,,,
138,83219,772,10429,841,1,0,N,N,N,CP_Drtn,TT_Task,DT_FixedDUR2,RV_OK,TK_NotStart,DS012,Fabrication and Painting of Production Deck,,0,0,960,0,0,0,960,0,0,0,,,,2012-06-13 08:00,2012-11-08 16:00,,2012-06-13 08:00,2012-11-08 16:00,2012-06-13 08:00,2012-11-08 16:00,2012-06-13 08:00,2012-11-08 16:00,,2012-06-13 08:00,2012-11-08 16:00,,PT_Normal,,,,,PtBKaXvQuUSuBlQPpQvcgw,xFi93CoKSi++4GmIMxpP9w,,,Y,0,0,,,2012-06-20 10:12,2012-06-20 10:12,admin,admin,,,
139,83220,772,10429,841,1,0,N,N,N,CP_Drtn,TT_Task,DT_FixedDUR2,RV_OK,TK_NotStart,DS013,Fabrication and Paint of Heli-Deck ( & Lifting if Required),,400,0,960,0,0,0,960,0,0,0,,,,2012-10-29 08:00,2013-03-21 16:00,,2012-08-27 08:00,2013-01-20 16:00,2012-08-27 08:00,2013-01-20 16:00,2012-08-27 08:00,2013-01-20 16:00,,2012-10-29 08:00,2013-03-21 16:00,,PT_Normal,,,,,u+lYOixuZEmCroS3jLPeEw,rvAg4dTFTzOC9LQPbMvlVA,,,N,0,0,,,2012-06-20 10:12,2012-06-20 10:12,admin,admin,,,
140,83221,772,10429,841,1,0,N,N,N,CP_Drtn,TT_Task,DT_FixedDUR2,RV_OK,TK_NotStart,DS014,Lifting Below Production Deck on High Cups,,24,0,40,0,0,0,40,0,0,0,,,,2012-10-23 08:00,2012-10-31 16:00,,2012-10-20 08:00,2012-10-24 16:00,2012-10-20 08:00,2012-10-24 16:00,2012-10-20 08:00,2012-10-24 16:00,,2012-10-23 08:00,2012-10-31 16:00,,PT_Normal,,,,,7qUpAXG7dk+8p3OnysDIAQ,bQ+CxC0TQriVcwNqie/vXQ,,,N,0,0,,,2012-06-20 10:12,2012-06-20 10:12,admin,admin,,,
141,83222,772,10429,841,1,0,N,N,N,CP_Drtn,TT_Task,DT_FixedDUR2,RV_OK,TK_NotStart,DS015,Lifting Production Deck on Below Production Level,,0,0,120,0,0,0,120,0,0,0,,,,2012-11-10 08:00,2012-11-27 16:00,,2012-11-10 08:00,2012-11-27 16:00,2012-11-10 08:00,2012-11-27 16:00,2012-11-10 08:00,2012-11-27 16:00,,2012-11-10 08:00,2012-11-27 16:00,,PT_Normal,,,,,pvhdQ+zLoUGlsGsHJLF0kg,kvv6UChdRT2TML26fqP2Og,,,Y,0,0,,,2012-06-20 10:12,2012-06-20 10:12,admin,admin,,,
142,83223,772,10429,841,1,0,N,N,N,CP_Drtn,TT_Task,DT_FixedDUR2,RV_OK,TK_NotStart,DS016,Fabrication & Installation of Deck Str. Miscellence / Padeyes,,80,24,960,0,0,0,960,0,0,0,,,,2012-10-17 08:00,2013-03-13 16:00,,2012-10-04 08:00,2013-03-02 16:00,2012-10-04 08:00,2013-03-02 16:00,2012-10-04 08:00,2013-03-02 16:00,,2012-10-17 08:00,2013-03-13 16:00,,PT_Normal,,,,,or5G+IMdSky8NZLBdVW8xQ,CWEx43mfRrCS6ZOEt8Q5OA,,,N,0,0,,,2012-06-20 10:12,2012-06-20 10:12,admin,admin,,,
143,83224,772,10429,841,0,0,N,N,N,CP_Drtn,TT_FinMile,DT_FixedDrtn,RV_OK,TK_NotStart,DS017,Physical Weighting,,80,0,0,0,0,0,0,0,0,0,,,,2013-03-06 16:00,2013-03-06 16:00,,2013-02-23 16:00,2013-02-23 16:00,2013-02-23 16:00,2013-02-23 16:00,2013-02-23 16:00,2013-02-23 16:00,,2013-03-06 16:00,2013-03-06 16:00,,PT_Normal,,,,,JGpic5NftEGkYFLxWQfh6Q,dU19c7ngSBGK2PpNjJWMWA,,,N,0,0,,,2012-06-20 10:12,2012-06-20 10:12,admin,admin,,,
144,83225,772,10429,841,1,0,N,N,N,CP_Drtn,TT_Task,DT_FixedDUR2,RV_OK,TK_NotStart,DS018,Clearanse of structure (Fab. & Painting ) Punch List,,56,56,168,0,0,0,168,0,0,0,,,,2013-03-14 08:00,2013-04-07 16:00,,2013-03-06 08:00,2013-03-30 16:00,2013-03-06 08:00,2013-03-30 16:00,2013-03-06 08:00,2013-03-30 16:00,,2013-03-14 08:00,2013-04-07 16:00,,PT_Normal,,,,,UIxplIh3eEeSSoKUHZsCug,2xbSngZtS1yuYdYRZesY/A,,,N,0,0,,,2012-06-20 10:12,2012-06-20 10:12,admin,admin,,,
145,83226,772,10431,841,1,0,N,N,N,CP_Drtn,TT_Task,DT_FixedDUR2,RV_OK,TK_NotStart,TFS011,Piping and Piping Supports Fabrication and Painting,,320,320,800,0,0,0,800,0,0,0,,,,2012-09-10 08:00,2013-01-10 16:00,,2012-07-21 08:00,2012-11-24 16:00,2012-07-21 08:00,2012-11-24 16:00,2012-07-21 08:00,2012-11-24 16:00,,2012-09-10 08:00,2013-01-10 16:00,,PT_Normal,,,,,Vo+VEHnX1Uib2F6euGIM0g,MmyOxGLAQBKzrY9ic24SKw,,,N,0,0,,,2012-06-20 10:12,2012-06-20 10:12,admin,admin,,,
146,83227,772,10431,841,1,0,N,N,N,CP_Drtn,TT_Task,DT_FixedDUR2,RV_OK,TK_NotStart,TSF012,Piping and Piping Supports Erection,,0,0,600,0,0,0,600,0,0,0,,,,2012-11-25 08:00,2013-02-23 16:00,,2012-11-25 08:00,2013-02-23 16:00,2012-11-25 08:00,2013-02-23 16:00,2012-11-25 08:00,2013-02-23 16:00,,2012-11-25 08:00,2013-02-23 16:00,,PT_Normal,,,,,quyCDFL4eUW8pPpR3D60VQ,sdcBHYglTkmbL+zUfSnz1Q,,,Y,0,0,,,2012-06-20 10:12,2012-06-20 10:12,admin,admin,,,
147,83228,772,10432,841,1,0,N,N,N,CP_Drtn,TT_Task,DT_FixedDUR2,RV_OK,TK_NotStart,TSF013,Equipment Erection on Below Production Level,,24,24,56,0,0,0,56,0,0,0,,,,2012-11-01 08:00,2012-11-08 16:00,,2012-10-29 08:00,2012-11-05 16:00,2012-10-29 08:00,2012-11-05 16:00,2012-10-29 08:00,2012-11-05 16:00,,2012-11-01 08:00,2012-11-08 16:00,,PT_Normal,,,,,Qa6Zp0iH/keaZsqvOalZPQ,z1CTK+RVT2ODKyZP+ZU/NQ,,,N,0,0,,,2012-06-20 10:12,2012-06-20 10:12,admin,admin,,,
148,83229,772,10432,841,1,0,N,N,N,CP_Drtn,TT_Task,DT_FixedDUR2,RV_OK,TK_NotStart,TSF014,Equipment Erection on Production Level,,216,216,120,0,0,0,120,0,0,0,,,,2012-12-30 08:00,2013-01-16 16:00,,2012-11-28 08:00,2012-12-15 16:00,2012-11-28 08:00,2012-12-15 16:00,2012-11-28 08:00,2012-12-15 16:00,,2012-12-30 08:00,2013-01-16 16:00,,PT_Normal,,,,,03vCXS0/Y0i+shto1SSNJQ,uRd8e2PwTCikyeTQ2cwlXg,,,N,0,0,,,2012-06-20 10:12,2012-06-20 10:12,admin,admin,,,
149,83230,772,10432,841,1,0,N,N,N,CP_Drtn,TT_Task,DT_FixedDUR2,RV_OK,TK_NotStart,TSF015,Equipment Erection on Helideck,,400,400,56,0,0,0,56,0,0,0,,,,2013-02-16 08:00,2013-02-23 16:00,,2012-12-16 08:00,2012-12-23 16:00,2012-12-16 08:00,2012-12-23 16:00,2012-12-16 08:00,2012-12-23 16:00,,2013-02-16 08:00,2013-02-23 16:00,,PT_Normal,,,,,2mIAAJqfL02S54HKn+zoOQ,aPJaRDLhRCS2fQT2L4W4XQ,,,N,0,0,,,2012-06-20 10:12,2012-06-20 10:12,admin,admin,,,
150,83231,772,10433,841,1,0,N,N,N,CP_Drtn,TT_Task,DT_FixedDUR2,RV_OK,TK_NotStart,TS17,E&I Activity,,16,16,720,0,0,0,720,0,0,0,,,,2012-11-12 08:00,2013-02-28 16:00,,2012-11-10 08:00,2013-02-26 16:00,2012-11-10 08:00,2013-02-26 16:00,2012-11-10 08:00,2013-02-26 16:00,,2012-11-12 08:00,2013-02-28 16:00,,PT_Normal,,,,,+j8BLsZNOU+OrJICVK5F1w,wsdfJJRZTh6vVDGXiSaIkQ,,,N,0,0,,,2012-06-20 10:12,2012-06-20 10:12,admin,admin,,,
151,83232,772,10434,841,1,0,N,N,N,CP_Drtn,TT_Task,DT_FixedDUR2,RV_OK,TK_NotStart,TS18,"Pre-commissioning """" Piping Hydrotest , Reinstatment , Megering , Continuity Test and Touch Up """"",,0,0,280,0,0,0,280,0,0,0,,,,2013-02-18 08:00,2013-03-30 16:00,,2013-02-18 08:00,2013-03-30 16:00,2013-02-18 08:00,2013-03-30 16:00,2013-02-18 08:00,2013-03-30 16:00,,2013-02-18 08:00,2013-03-30 16:00,,PT_Normal,,,,,OTq2jcFatkOlMrI23bWX1Q,lPjrgJbBSWyVdJYtkd0lWQ,,,Y,0,0,,,2012-06-20 10:12,2012-06-20 10:12,admin,admin,,,
152,83233,772,10435,841,1,0,N,N,N,CP_Drtn,TT_Task,DT_FixedDUR2,RV_OK,TK_NotStart,PL11,P/L Spools Fabrication,,832,0,720,0,0,0,720,0,0,0,,,,2012-11-07 08:00,2013-02-24 16:00,,2012-06-30 08:00,2012-10-17 16:00,2012-06-30 08:00,2012-10-17 16:00,2012-06-30 08:00,2012-10-17 16:00,,2012-11-07 08:00,2013-02-24 16:00,,PT_Normal,,,,,fNpyI06rOEST5I8j8iDnuA,HLJPh8QQQuqRB3kePFiOKw,,,N,0,0,,,2012-06-20 10:12,2012-06-20 10:12,admin,admin,,,
153,83234,772,10437,841,0,0,N,N,N,CP_Drtn,TT_Mile,DT_FixedDrtn,RV_OK,TK_NotStart,LOPS11,Arrival of 01st Shipment Material Barge ( P/L Spools),,0,128,0,0,0,0,0,0,0,0,2012-09-15 08:00,,,2012-09-15 08:00,2012-09-15 08:00,,2012-09-15 08:00,2012-09-15 08:00,2012-09-15 08:00,2012-09-15 08:00,2012-09-15 08:00,2012-09-15 08:00,,2012-09-15 08:00,2012-09-15 08:00,CS_MSO,PT_Normal,,,,,xehV9+x7ZE2jS/zzmhzWQA,B4Hx/kkxQZKPJEG8DiZMqQ,,,N,0,0,,,2012-06-20 10:12,2012-06-20 10:12,admin,admin,,,
154,83235,772,10437,841,1,0,N,N,N,CP_Drtn,TT_Task,DT_FixedDUR2,RV_OK,TK_NotStart,LOPS12,1st Shipment Material Barge Preparation,,1088,0,96,0,0,0,96,0,0,0,,,,2013-03-20 08:00,2013-04-02 16:00,,2012-10-03 08:00,2012-10-17 16:00,2012-10-03 08:00,2012-10-17 16:00,2012-10-03 08:00,2012-10-17 16:00,,2013-03-20 08:00,2013-04-02 16:00,,PT_Normal,,,,,ndqnrpRNm0Kh7Ee9x77pLg,ffJmeitJThGKpY3WVSZDNQ,,,N,0,0,,,2012-06-20 10:12,2012-06-20 10:12,admin,admin,,,
155,83236,772,10437,841,1,0,N,N,N,CP_Drtn,TT_Task,DT_FixedDUR2,RV_OK,TK_NotStart,LOPS13,"L/O & Sea Fastening (P/L Spools 18"""" & 8"""")",,1088,0,32,0,0,0,32,0,0,0,,,,2013-04-03 08:00,2013-04-07 16:00,,2012-10-18 08:00,2012-10-22 16:00,2012-10-18 08:00,2012-10-22 16:00,2012-10-18 08:00,2012-10-22 16:00,,2013-04-03 08:00,2013-04-07 16:00,,PT_Normal,,,,,kp9L75XeSkWVYE8hGyBpLQ,0IwOiWOuTGWgp9eZJV76QQ,,,N,0,0,,,2012-06-20 10:12,2012-06-20 10:12,admin,admin,,,
156,83237,772,10438,841,0,0,N,N,N,CP_Drtn,TT_Mile,DT_FixedDrtn,RV_OK,TK_NotStart,LOJK11,Arrival of 02nd Shipment Material Barge ( Jacket and Piles ),,0,263.983333,0,0,0,0,0,0,0,0,2012-12-01 08:01,,,2012-12-01 08:01,2012-12-01 08:01,,2012-12-01 08:01,2012-12-01 08:01,2012-12-01 08:01,2012-12-01 08:01,2012-12-01 08:01,2012-12-01 08:01,,2012-12-01 08:01,2012-12-01 08:01,CS_MSO,PT_Normal,,,,,/rdQ3u43Y0aVeyWgwwuYrQ,TZSnzFwbTP2WYUW5WMHAXA,,,N,0,0,,,2012-06-20 10:12,2012-06-20 10:12,admin,admin,,,
157,83238,772,10438,841,1,0,N,N,N,CP_Drtn,TT_Task,DT_FixedDUR2,RV_OK,TK_NotStart,LOJK12,02nd Shipment Material Barge Preparation,,208,0,96,0,0,0,96,0,0,0,,,,2013-02-11 08:00,2013-02-24 16:00,,2013-01-09 08:00,2013-01-22 16:00,2013-01-09 08:00,2013-01-22 16:00,2013-01-09 08:00,2013-01-22 16:00,,2013-02-11 08:00,2013-02-24 16:00,,PT_Normal,,,,,S7wGNTJDfUW+8AjycDcj2g,XbtAi6jCTDyBXVHSpw5OSQ,,,N,0,0,,,2012-06-20 10:12,2012-06-20 10:12,admin,admin,,,
158,83239,772,10438,841,1,0,N,N,N,CP_Drtn,TT_Task,DT_FixedDUR2,RV_OK,TK_NotStart,LOJK13,L/O & Sea fastening ( Jacket & Piles ),,208,0,56,0,0,0,56,0,0,0,,,,2013-02-25 08:00,2013-03-04 16:00,,2013-01-23 08:00,2013-01-31 16:00,2013-01-23 08:00,2013-01-31 16:00,2013-01-23 08:00,2013-01-31 16:00,,2013-02-25 08:00,2013-03-04 16:00,,PT_Normal,,,,,T2pkffL22UqmUBjuIecM7w,0h5qrf7kSZW3DGU5wFjrDw,,,N,0,0,,,2012-06-20 10:12,2012-06-20 10:12,admin,admin,,,
159,83240,772,10439,841,0,0,N,N,N,CP_Drtn,TT_Mile,DT_FixedDrtn,RV_OK,TK_NotStart,LODK11,Arrival of 03rd Shipment Material Barge ( Deck C/W TSF ),,-0.016667,104,0,0,0,0,0,0,0,0,2013-03-01 08:01,,,2013-02-28 15:59,2013-02-28 15:59,,2013-03-02 08:00,2013-03-02 08:00,2013-03-02 08:00,2013-03-02 08:00,2013-03-02 08:00,2013-03-02 08:00,,2013-02-28 15:59,2013-02-28 15:59,CS_MSO,PT_Normal,,,,,+yVxVOPraUyK1NRhdp+wfA,ExIEDAbgRLSmFck0X+OxYg,,,N,0,0,,,2012-06-20 10:12,2012-06-20 10:12,admin,admin,,,
160,83241,772,10439,841,1,0,N,N,N,CP_Drtn,TT_Task,DT_FixedDUR2,RV_OK,TK_NotStart,LODK12,3rd Shipment Material Barge Preparation,,0,0,96,0,0,0,96,0,0,0,,,,2013-03-17 08:00,2013-03-30 16:00,,2013-03-17 08:00,2013-03-30 16:00,2013-03-17 08:00,2013-03-30 16:00,2013-03-17 08:00,2013-03-30 16:00,,2013-03-17 08:00,2013-03-30 16:00,,PT_Normal,,,,,udpKSE0PREWpEz84cupRDw,lPDdUYuUTIydlmlcan93BQ,,,Y,0,0,,,2012-06-20 10:12,2012-06-20 10:12,admin,admin,,,
161,83242,772,10439,841,1,0,N,N,N,CP_Drtn,TT_Task,DT_FixedDUR2,RV_OK,TK_NotStart,LODK13,L/O & Sea fastening ( Deck),,0,0,56,0,0,0,56,0,0,0,,,,2013-03-31 08:00,2013-04-07 16:00,,2013-03-31 08:00,2013-04-07 16:00,2013-03-31 08:00,2013-04-07 16:00,2013-03-31 08:00,2013-04-07 16:00,,2013-03-31 08:00,2013-04-07 16:00,,PT_Normal,,,,,InSRN6FydkWjBf3988Pjxg,a29m8wZtSbmmAh/FPoIQAw,,,Y,0,0,,,2012-06-20 10:12,2012-06-20 10:12,admin,admin,,,
162,83243,772,10420,794,1,0,N,N,N,CP_Drtn,TT_Task,DT_FixedDrtn,RV_OK,TK_NotStart,PRP32,"Pipeline 8"""" & Fittings",,-0.016667,2087,408,0,0,0,408,0,0,0,2012-05-30 17:00,,,2012-05-30 16:59,2012-07-20 16:59,,2012-05-31 08:00,2012-07-20 17:00,2012-05-31 08:00,2012-07-20 17:00,2012-05-31 08:00,2012-07-20 17:00,,2012-05-30 16:59,2012-07-20 16:59,CS_MSO,PT_Normal,,,,,9oZfFZekBkiGUClhj5HB5A,tjm2mx2cUUyxd/Z8deMfQA,,,N,0,0,,,2012-06-20 10:12,2012-06-20 10:12,admin,admin,,,
163,83244,772,10410,841,0,0,N,N,N,CP_Drtn,TT_FinMile,DT_FixedDrtn,RV_OK,TK_NotStart,GM21,Reciving Fax of Award,,-0.016667,0,0,0,0,0,0,0,0,0,2012-01-20 16:00,,,2012-01-19 16:00,2012-01-19 16:00,,2012-01-21 08:01,2012-01-21 08:01,2012-01-21 08:01,2012-01-21 08:01,2012-01-21 08:01,2012-01-21 08:01,,2012-01-19 16:00,2012-01-19 16:00,CS_MEO,PT_Normal,,,,,xUiefr+W20WqBvSlRlLoCA,mAYBql7WQzuUeAh5RGjavw,,,N,0,0,,,2012-06-20 10:14,2012-06-20 10:14,admin,admin,,,
164,83245,772,10410,841,0,0,N,N,N,CP_Drtn,TT_Mile,DT_FixedDrtn,RV_OK,TK_NotStart,GM22,Project Fab. Start,,1951.983333,1952,0,0,0,0,0,0,0,0,,,,2013-04-07 15:59,2013-04-07 15:59,,2012-06-13 08:00,2012-06-13 08:00,2012-06-13 08:00,2012-06-13 08:00,2012-06-13 08:00,2012-06-13 08:00,,2013-04-07 15:59,2013-04-07 15:59,,PT_Normal,,,,,k9LMymxKsEeOvxnH6mVpMw,MUGR7HsxSCatq1Lsy+yI2A,,,N,0,0,,,2012-06-20 10:14,2012-06-20 10:14,admin,admin,,,
165,83246,772,10410,841,0,0,N,N,N,CP_Drtn,TT_Mile,DT_FixedDrtn,RV_OK,TK_NotStart,GM24,Ready for Load out ( 02nd Shipment/ Jacket & Piles ),,208,208,0,0,0,0,0,0,0,0,,,,2013-02-25 08:00,2013-02-25 08:00,,2013-01-23 08:00,2013-01-23 08:00,2013-01-23 08:00,2013-01-23 08:00,2013-01-23 08:00,2013-01-23 08:00,,2013-02-25 08:00,2013-02-25 08:00,,PT_Normal,,,,,8ujCQgo+00C9a3aPttSYiQ,oEdGu9OnQ0CgAkVlSv8iuw,,,N,0,0,,,2012-06-20 10:14,2012-06-20 10:14,admin,admin,,,
166,83247,772,10410,841,0,0,N,N,N,CP_Drtn,TT_Mile,DT_FixedDrtn,RV_OK,TK_NotStart,GM25,Ready for Load out ( 03rd Shipment/ Deck C/W TSF ),,55.983333,56,0,0,0,0,0,0,0,0,,,,2013-04-07 15:59,2013-04-07 15:59,,2013-03-31 08:00,2013-03-31 08:00,2013-03-31 08:00,2013-03-31 08:00,2013-03-31 08:00,2013-03-31 08:00,,2013-04-07 15:59,2013-04-07 15:59,,PT_Normal,,,,,kALi0/ot0k6dN4IWjhONuA,h7hpizZeQXG79P6YGic48A,,,N,0,0,,,2012-06-20 10:14,2012-06-20 10:14,admin,admin,,,
167,83248,772,10410,841,0,0,N,N,N,CP_Drtn,TT_Mile,DT_FixedDrtn,RV_OK,TK_NotStart,GM23,"Ready for Load out (01st Shipment / Pipeline Spools 18"""" & 8"""")",,1119.983333,1120,0,0,0,0,0,0,0,0,,,,2013-04-07 15:59,2013-04-07 15:59,,2012-10-18 08:00,2012-10-18 08:00,2012-10-18 08:00,2012-10-18 08:00,2012-10-18 08:00,2012-10-18 08:00,,2013-04-07 15:59,2013-04-07 15:59,,PT_Normal,,,,,+8BnIOgmb0GTvm61AUJ5Zw,hwMqvqcnTaWjHD3UCB8GZQ,,,N,0,0,,,2012-06-20 10:14,2012-06-20 10:14,admin,admin,,,
168,83249,772,10412,794,1,0,N,N,N,CP_Drtn,TT_Task,DT_FixedDrtn,RV_OK,TK_NotStart,ENS23,Receiving Jacket Primary & Secondary Steel IFC DWG`s,,0,0,1104,0,0,0,1104,0,0,0,2011-11-30 08:01,,,2011-11-30 08:01,2012-04-16 08:01,,2011-11-30 08:01,2012-04-16 08:01,2011-11-30 08:01,2012-04-16 08:01,2011-11-30 08:01,2012-04-16 08:01,,2011-11-30 08:01,2012-04-16 08:01,CS_MSO,PT_Normal,,,,,/VUJEpgtYkqk4CP8Qmhi4Q,/taVGz7GStKxIdbmdm3JkA,,,N,0,0,,,2012-06-20 10:14,2012-06-20 10:14,admin,admin,,,
169,83250,772,10412,794,0,0,N,N,N,CP_Drtn,TT_FinMile,DT_FixedDrtn,RV_OK,TK_NotStart,ENS24,Receiving Piles IFC DWG`s,,0,720,0,0,0,0,0,0,0,0,2012-01-17 08:01,,,2012-01-17 08:01,2012-01-17 08:01,,2012-01-17 08:01,2012-01-17 08:01,2012-01-17 08:01,2012-01-17 08:01,2012-01-17 08:01,2012-01-17 08:01,,2012-01-17 08:01,2012-01-17 08:01,CS_MEO,PT_Normal,,,,,dMq9g3YPCEOA1VZ2y7VLEA,Na3Aup6tShC+yRgy8OADFw,,,N,0,0,,,2012-06-20 10:14,2012-06-20 10:14,admin,admin,,,
170,83251,772,10412,794,1,0,N,N,N,CP_Drtn,TT_Task,DT_FixedDUR2,RV_OK,TK_NotStart,ENS25,Receiving Deck Str. Primary & Secondary IFC DWG`s,,0,224,328,0,0,0,328,0,0,0,2012-02-07 08:01,,,2012-02-07 08:01,2012-03-19 08:01,,2012-02-07 08:01,2012-03-19 08:01,2012-02-07 08:01,2012-03-19 08:01,2012-02-07 08:01,2012-03-19 08:01,,2012-02-07 08:01,2012-03-19 08:01,CS_MSO,PT_Normal,,,,,I/EcMfrQ6UWYmf0J/ck35w,fi7weAl5SEGTR2lLUeKx/w,,,N,0,0,,,2012-06-20 10:14,2012-06-20 10:14,admin,admin,,,
171,83252,772,10412,794,0,0,N,N,N,CP_Drtn,TT_FinMile,DT_FixedDrtn,RV_OK,TK_NotStart,ENS21,"Receiving Final Jacket , Boat Land & Piles MTO",,135.983333,135.983333,0,0,0,0,0,0,0,0,,,,2012-02-14 17:00,2012-02-14 17:00,,2012-01-29 08:01,2012-01-29 08:01,2012-01-29 08:01,2012-01-29 08:01,2012-01-29 08:01,2012-01-29 08:01,,2012-02-14 17:00,2012-02-14 17:00,,PT_Normal,,,,,d09yk4otWEuJdYQcPYvHQw,TPEjRmwKRrq6hsy6oKat/g,,,N,0,0,,,2012-06-20 10:14,2012-06-20 10:14,admin,admin,,,
172,83253,772,10412,794,0,0,N,N,N,CP_Drtn,TT_FinMile,DT_FixedDrtn,RV_OK,TK_NotStart,ENS22,Receiving Final Deck Str. MTO,,135.983333,135.983333,0,0,0,0,0,0,0,0,,,,2012-02-14 17:00,2012-02-14 17:00,,2012-01-29 08:01,2012-01-29 08:01,2012-01-29 08:01,2012-01-29 08:01,2012-01-29 08:01,2012-01-29 08:01,,2012-02-14 17:00,2012-02-14 17:00,,PT_Normal,,,,,hNmiknM0O02/yjtkoUkRog,6nkSfB2oQqWjhNUPP6KgpA,,,N,0,0,,,2012-06-20 10:14,2012-06-20 10:14,admin,admin,,,
173,83254,772,10412,794,1,0,N,N,N,CP_Drtn,TT_Task,DT_FixedDrtn,RV_OK,TK_NotStart,ENS28,Receiving IFC Equipment fixation DWG`s,,0,1559.983333,104,0,0,0,104,0,0,0,2012-04-04 08:01,,,2012-04-04 08:01,2012-04-17 08:01,,2012-04-04 08:01,2012-04-17 08:01,2012-04-04 08:01,2012-04-17 08:01,2012-04-04 08:01,2012-04-17 08:01,,2012-04-04 08:01,2012-04-17 08:01,CS_MSO,PT_Normal,,,,,1oZIQqlZFU2aREHdrTIyEA,mm1mBipHSJKSJiX6ECgsuA,,,N,0,0,,,2012-06-20 10:14,2012-06-20 10:14,admin,admin,,,
174,83255,772,10412,794,1,0,N,N,N,CP_Drtn,TT_Task,DT_FixedDUR2,RV_OK,TK_NotStart,ENS26,Receiving Piping Supports IFC DWG's,,0,3078.983333,160,0,0,0,160,0,0,0,2012-02-28 08:01,,,2012-02-28 08:01,2012-03-19 08:01,,2012-02-28 08:01,2012-03-19 08:01,2012-02-28 08:01,2012-03-19 08:01,2012-02-28 08:01,2012-03-19 08:01,,2012-02-28 08:01,2012-03-19 08:01,CS_MSO,PT_Normal,,,,,erM3hBl7sUyMPrcx7BtVpw,00Owhd0XR8uvJLKhPzMELA,,,N,0,0,,,2012-06-20 10:14,2012-06-20 10:14,admin,admin,,,
175,83256,772,10412,794,1,0,N,N,N,CP_Drtn,TT_Task,DT_FixedDUR2,RV_OK,TK_NotStart,ENS27,Receiving Cable tarys Support IFC DWG's,,0,3022.983333,104,0,0,0,104,0,0,0,2012-03-13 08:01,,,2012-03-13 08:01,2012-03-26 08:01,,2012-03-13 08:01,2012-03-26 08:01,2012-03-13 08:01,2012-03-26 08:01,2012-03-13 08:01,2012-03-26 08:01,,2012-03-13 08:01,2012-03-26 08:01,CS_MSO,PT_Normal,,,,,O2qHnA+8okSi+/qokuEjYg,JPgGdggzREiAYSQ7vnqU2w,,,N,0,0,,,2012-06-20 10:14,2012-06-20 10:14,admin,admin,,,
176,83257,772,10412,794,1,0,N,N,N,CP_Drtn,TT_Task,DT_FixedDrtn,RV_OK,TK_NotStart,ENS29,"Receiving P/L 8"""" & 18"""" IFC DWG's",,0,2736,160,0,0,0,160,0,0,0,2012-04-10 16:00,,,2012-04-10 16:00,2012-04-30 16:00,,2012-04-10 16:00,2012-04-30 16:00,2012-04-10 16:00,2012-04-30 16:00,2012-04-10 16:00,2012-04-30 16:00,,2012-04-10 16:00,2012-04-30 16:00,CS_MSO,PT_Normal,,,,,5Te7ItIdukWCwALnf5vkCw,98Xxuu9fQZixtpBjPwMmlQ,,,N,0,0,,,2012-06-20 10:14,2012-06-20 10:14,admin,admin,,,
177,83258,772,10413,794,1,0,N,N,N,CP_Drtn,TT_Task,DT_FixedDrtn,RV_OK,TK_NotStart,ENT23,Receiving Piping ISO`s IFC DWG's,,0,1047.983333,112,0,0,0,112,0,0,0,2012-02-27 08:01,,,2012-02-27 08:01,2012-03-12 08:01,,2012-02-27 08:01,2012-03-12 08:01,2012-02-27 08:01,2012-03-12 08:01,2012-02-27 08:01,2012-03-12 08:01,,2012-02-27 08:01,2012-03-12 08:01,CS_MSO,PT_Normal,,,,,fYRQjdc3CUO1tYmERpCDNw,enOOp99+SsqEvqB5hnSgoA,,,N,0,0,,,2012-06-20 10:14,2012-06-20 10:14,admin,admin,,,
178,83259,772,10413,794,0,0,N,N,N,CP_Drtn,TT_FinMile,DT_FixedDrtn,RV_OK,TK_NotStart,ENT21,Issue Approved P&ID's / Equipment List IFC DWG's,,0,3584,0,0,0,0,0,0,0,0,2012-01-15 16:00,,,2012-01-15 16:00,2012-01-15 16:00,,2012-01-15 16:00,2012-01-15 16:00,2012-01-15 16:00,2012-01-15 16:00,2012-01-15 16:00,2012-01-15 16:00,,2012-01-15 16:00,2012-01-15 16:00,CS_MEO,PT_Normal,,,,,lHb9ie7T90WyMQu0AojguA,93sGNlW6QoCv/1ksHG2NzA,,,N,0,0,,,2012-06-20 10:14,2012-06-20 10:14,admin,admin,,,
179,83260,772,10413,794,0,0,N,N,N,CP_Drtn,TT_FinMile,DT_FixedDrtn,RV_OK,TK_NotStart,ENT22,Issue plat plans IFC DWG's,,0,3408,0,0,0,0,0,0,0,0,2012-02-06 16:00,,,2012-02-06 16:00,2012-02-06 16:00,,2012-02-06 16:00,2012-02-06 16:00,2012-02-06 16:00,2012-02-06 16:00,2012-02-06 16:00,2012-02-06 16:00,,2012-02-06 16:00,2012-02-06 16:00,CS_MEO,PT_Normal,,,,,Dvo302MBsk68WqZ+C238eA,FmX28kBFQpGSXexVmL7Wlw,,,N,0,0,,,2012-06-20 10:14,2012-06-20 10:14,admin,admin,,,
180,83261,772,10413,841,0,0,N,N,N,CP_Drtn,TT_FinMile,DT_FixedDrtn,RV_OK,TK_NotStart,ENT24,Issue Hydrotest maps & loops IFC DWG's,,0,2648,0,0,0,0,0,0,0,0,2012-02-28 16:00,,,2012-02-28 16:00,2012-02-28 16:00,,2012-02-28 16:00,2012-02-28 16:00,2012-02-28 16:00,2012-02-28 16:00,2012-02-28 16:00,2012-02-28 16:00,,2012-02-28 16:00,2012-02-28 16:00,CS_MEO,PT_Normal,,,,,deOxB2C3JUauZAQ8u95Ozw,5DGNq1VSTqKaHuj3eSEIjw,,,N,0,0,,,2012-06-20 10:14,2012-06-20 10:14,admin,admin,,,
181,83262,772,10414,794,1,0,N,N,N,CP_Drtn,TT_Task,DT_FixedDUR2,RV_OK,TK_NotStart,ENE21,Receiving E&I IFC DWG`s,,0,2279.983333,776,0,0,0,776,0,0,0,2012-01-23 08:01,,,2012-01-23 08:01,2012-04-29 08:01,,2012-01-23 08:01,2012-04-29 08:01,2012-01-23 08:01,2012-04-29 08:01,2012-01-23 08:01,2012-04-29 08:01,,2012-01-23 08:01,2012-04-29 08:01,CS_MSO,PT_Normal,,,,,ysyBS86lKUeTze69YqVfSg,3Z6l8wXrS6642p/eM8yB1A,,,N,0,0,,,2012-06-20 10:14,2012-06-20 10:14,admin,admin,,,
182,83263,772,10415,841,1,0,N,N,N,CP_Drtn,TT_Task,DT_FixedDUR2,RV_OK,TK_NotStart,PF21,Pre-Fabrication of Steel Structure ( Jacket & Piles),,208,0,960,0,0,0,960,0,0,0,,,,2012-07-14 08:00,2012-12-10 16:00,,2012-06-13 08:00,2012-11-08 16:00,2012-06-13 08:00,2012-11-08 16:00,2012-06-13 08:00,2012-11-08 16:00,,2012-07-14 08:00,2012-12-10 16:00,,PT_Normal,,,,,vMVnW0nvaUeWRRm5QVKhMQ,BUUxQXUKQcKvFYRqrGtbRg,,,N,0,0,,,2012-06-20 10:14,2012-06-20 10:14,admin,admin,,,
183,83264,772,10417,794,1,0,N,N,N,CP_Drtn,TT_Task,DT_FixedDUR2,RV_OK,TK_NotStart,PRT41,Piping Bulk material 1st batch,,-0.016667,536,240,0,0,0,240,0,0,0,2012-05-07 17:00,,,2012-05-07 16:59,2012-06-06 16:59,,2012-05-08 08:00,2012-06-06 17:00,2012-05-08 08:00,2012-06-06 17:00,2012-05-08 08:00,2012-06-06 17:00,,2012-05-07 16:59,2012-06-06 16:59,CS_MSO,PT_Normal,,,,,eOWKAeH+okyx9RIVt70EzA,DqLN36xRQY+kZsfpyGsU9w,,,N,0,0,,,2012-06-20 10:14,2012-06-20 10:14,admin,admin,,,
184,83265,772,10417,794,1,0,N,N,N,CP_Drtn,TT_Task,DT_FixedDUR2,RV_OK,TK_NotStart,PRT42,Piping Bulk material 2nd batch,,-0.016667,855,240,0,0,0,240,0,0,0,2012-06-10 17:00,,,2012-06-10 16:59,2012-07-10 16:59,,2012-06-11 08:00,2012-07-10 17:00,2012-06-11 08:00,2012-07-10 17:00,2012-06-11 08:00,2012-07-10 17:00,,2012-06-10 16:59,2012-07-10 16:59,CS_MSO,PT_Normal,,,,,f0KIw3cUAUuRjGJIm47H8Q,fRmh57i3SamJM0o1p2/3vA,,,N,0,0,,,2012-06-20 10:14,2012-06-20 10:14,admin,admin,,,
185,83266,772,10417,794,1,0,N,N,N,CP_Drtn,TT_Task,DT_FixedDUR2,RV_OK,TK_NotStart,PRT23,Piping Valves Bulk material 1st batch,,-0.016667,999,112,0,0,0,112,0,0,0,2012-06-23 17:00,,,2012-06-23 16:59,2012-07-07 16:59,,2012-06-24 08:00,2012-07-07 17:00,2012-06-24 08:00,2012-07-07 17:00,2012-06-24 08:00,2012-07-07 17:00,,2012-06-23 16:59,2012-07-07 16:59,CS_MSO,PT_Normal,,,,,K6pBq/8OqkG0S6SmSyg33w,7wg9/w/MQ7a7zI20+pTM+A,,,N,0,0,,,2012-06-20 10:14,2012-06-20 10:14,admin,admin,,,
186,83267,772,10417,794,1,0,N,N,N,CP_Drtn,TT_Task,DT_FixedDUR2,RV_OK,TK_NotStart,PRT24,Piping valves Bulk material 2nd batch,,-0.016667,767,112,0,0,0,112,0,0,0,2012-07-22 17:00,,,2012-07-22 16:59,2012-08-05 16:59,,2012-07-23 08:00,2012-08-05 17:00,2012-07-23 08:00,2012-08-05 17:00,2012-07-23 08:00,2012-08-05 17:00,,2012-07-22 16:59,2012-08-05 16:59,CS_MSO,PT_Normal,,,,,6O1mdgc0Y0Sg4ftnnVCzfg,iGFfO+XNTpqt+16+eOx2EA,,,N,0,0,,,2012-06-20 10:14,2012-06-20 10:14,admin,admin,,,
187,83268,772,10417,794,1,0,N,N,N,CP_Drtn,TT_Task,DT_FixedDUR2,RV_OK,TK_NotStart,PRT25,Flanges,,-0.016667,8,360,0,0,0,360,0,0,0,2012-07-13 17:00,,,2012-07-13 16:59,2012-08-27 16:59,,2012-07-14 08:00,2012-08-27 17:00,2012-07-14 08:00,2012-08-27 17:00,2012-07-14 08:00,2012-08-27 17:00,,2012-07-13 16:59,2012-08-27 16:59,CS_MSO,PT_Normal,,,,,wwgVsp14+k6cFfcxLZzO5Q,VAq1SSMERrmj1gqIqoQiTg,,,N,0,0,,,2012-06-20 10:14,2012-06-20 10:14,admin,admin,,,
188,83269,772,10417,794,1,0,N,N,N,CP_Drtn,TT_Task,DT_FixedDUR2,RV_OK,TK_NotStart,PRT26,Pressure Safety Valve,,-0.016667,1519,352,0,0,0,352,0,0,0,2012-06-04 17:00,,,2012-06-04 16:59,2012-07-18 16:59,,2012-06-05 08:00,2012-07-18 17:00,2012-06-05 08:00,2012-07-18 17:00,2012-06-05 08:00,2012-07-18 17:00,,2012-06-04 16:59,2012-07-18 16:59,CS_MSO,PT_Normal,,,,,wNc+NrCjakScrJhdm3EWuA,+SvOOjbVT6SM2f4LWOHEpg,,,N,0,0,,,2012-06-20 10:14,2012-06-20 10:14,admin,admin,,,
189,83270,772,10417,794,1,0,N,N,N,CP_Drtn,TT_Task,DT_FixedDUR2,RV_OK,TK_NotStart,PRT27,Pressure regulator Valve,,-0.016667,1231,240,0,0,0,240,0,0,0,2012-07-24 17:00,,,2012-07-24 16:59,2012-08-23 16:59,,2012-07-25 08:00,2012-08-23 17:00,2012-07-25 08:00,2012-08-23 17:00,2012-07-25 08:00,2012-08-23 17:00,,2012-07-24 16:59,2012-08-23 16:59,CS_MSO,PT_Normal,,,,,wezZ6hnElk6b7s1siqpI7A,FkVucARhQlCiyikicegBhQ,,,N,0,0,,,2012-06-20 10:14,2012-06-20 10:14,admin,admin,,,
190,83271,772,10417,794,1,0,N,N,N,CP_Drtn,TT_Task,DT_FixedDUR2,RV_OK,TK_NotStart,PRT28,Shutdown Valve,,-0.016667,1135,248,0,0,0,248,0,0,0,2012-08-04 17:00,,,2012-08-04 16:59,2012-09-04 16:59,,2012-08-05 08:00,2012-09-04 17:00,2012-08-05 08:00,2012-09-04 17:00,2012-08-05 08:00,2012-09-04 17:00,,2012-08-04 16:59,2012-09-04 16:59,CS_MSO,PT_Normal,,,,,L+iEFK7Ts064gvZBoF/PbQ,GViNUzKNR0i8XYjXx02J5Q,,,N,0,0,,,2012-06-20 10:14,2012-06-20 10:14,admin,admin,,,
191,83272,772,10418,794,1,0,N,N,N,CP_Drtn,TT_Task,DT_FixedDUR2,RV_OK,TK_NotStart,PRT29,Chemical Injection PKG.,,-0.016667,1264,360,0,0,0,360,0,0,0,2012-05-08 17:00,,,2012-05-08 16:59,2012-06-22 16:59,,2012-05-09 08:00,2012-06-22 17:00,2012-05-09 08:00,2012-06-22 17:00,2012-05-09 08:00,2012-06-22 17:00,,2012-05-08 16:59,2012-06-22 16:59,CS_MSO,PT_Normal,,,,,jtrYaWdlWEOxtYRzCRm0zQ,eKvs6VRWSyOb6HNtkF9+AA,,,N,0,0,,,2012-06-20 10:14,2012-06-20 10:14,admin,admin,,,
192,83273,772,10418,794,1,0,N,N,N,CP_Drtn,TT_Task,DT_FixedDUR2,RV_OK,TK_NotStart,PRT30,Launcher recivier,,-0.016667,960,360,0,0,0,360,0,0,0,2012-06-15 17:00,,,2012-06-15 16:59,2012-07-30 16:59,,2012-06-16 08:00,2012-07-30 17:00,2012-06-16 08:00,2012-07-30 17:00,2012-06-16 08:00,2012-07-30 17:00,,2012-06-15 16:59,2012-07-30 16:59,CS_MSO,PT_Normal,,,,,HnZ3A9QCNkaXFVkcKtAmtg,3IwzhhfhR3KgxUsvdJ6rqQ,,,N,0,0,,,2012-06-20 10:14,2012-06-20 10:14,admin,admin,,,
193,83274,772,10418,794,1,0,N,N,N,CP_Drtn,TT_Task,DT_FixedDUR2,RV_OK,TK_NotStart,PRT51,Vent KOD,,-0.016667,864,360,0,0,0,360,0,0,0,2012-06-27 17:00,,,2012-06-27 16:59,2012-08-11 16:59,,2012-06-28 08:00,2012-08-11 17:00,2012-06-28 08:00,2012-08-11 17:00,2012-06-28 08:00,2012-08-11 17:00,,2012-06-27 16:59,2012-08-11 16:59,CS_MSO,PT_Normal,,,,,97jOVYxiUkeQguITS720lw,V+De5pWvTHyHzJo6bSHRww,,,N,0,0,,,2012-06-20 10:14,2012-06-20 10:14,admin,admin,,,
194,83275,772,10418,794,1,0,N,N,N,CP_Drtn,TT_Task,DT_FixedDUR2,RV_OK,TK_NotStart,PRT52,Open Drain Tank,,-0.016667,624,360,0,0,0,360,0,0,0,2012-06-27 17:00,,,2012-06-27 16:59,2012-08-11 16:59,,2012-06-28 08:00,2012-08-11 17:00,2012-06-28 08:00,2012-08-11 17:00,2012-06-28 08:00,2012-08-11 17:00,,2012-06-27 16:59,2012-08-11 16:59,CS_MSO,PT_Normal,,,,,Uql+XuucxkOuh8qV4A2iwg,Dvo6DiXYTvSm95/lOoAUnw,,,N,0,0,,,2012-06-20 10:14,2012-06-20 10:14,admin,admin,,,
195,83276,772,10419,794,1,0,N,N,N,CP_Drtn,TT_Task,DT_FixedDUR2,RV_OK,TK_NotStart,PRS23,Delivery of Structure Material (F.O.B - 13 Wks.) - (Gupco Responsability),,0,0,728,0,0,0,728,0,0,0,,,,2012-02-15 08:00,2012-05-15 17:00,,2012-02-15 08:00,2012-05-15 17:00,2012-02-15 08:00,2012-05-15 17:00,2012-02-15 08:00,2012-05-15 17:00,,2012-02-15 08:00,2012-05-15 17:00,,PT_Normal,,,,,fEQoueTdp0GPcj/5fdMVpw,dmjGd5dtRyGQN7eIgjvWtA,,,Y,0,0,,,2012-06-20 10:14,2012-06-20 10:14,admin,admin,,,
196,83277,772,10419,794,1,0,N,N,N,CP_Drtn,TT_Task,DT_FixedDUR2,RV_OK,TK_NotStart,PRS25,Material check with IFC DWG's to Prepare balance material,,1566.983333,0,56,0,0,0,56,0,0,0,,,,2012-10-28 16:00,2012-11-04 16:00,,2012-04-16 08:01,2012-04-23 08:01,2012-04-16 08:01,2012-04-23 08:01,2012-04-16 08:01,2012-04-23 08:01,,2012-10-28 16:00,2012-11-04 16:00,,PT_Normal,,,,,klomEGYtREKBOHAcGDdtGA,TiJCnNvxQjGqD/lEVDLgtw,,,N,0,0,,,2012-06-20 10:14,2012-06-20 10:14,admin,admin,,,
197,83278,772,10419,794,1,0,N,N,N,CP_Drtn,TT_Task,DT_FixedDUR2,RV_OK,TK_NotStart,PRS26,Delivery of balance material,,1566.983333,1566.983333,1232,0,0,0,1232,0,0,0,,,,2012-11-04 16:00,2013-04-07 16:00,,2012-04-23 08:01,2012-09-24 08:01,2012-04-23 08:01,2012-09-24 08:01,2012-04-23 08:01,2012-09-24 08:01,,2012-11-04 16:00,2013-04-07 16:00,,PT_Normal,,,,,GvGSRhFzRkWTSyXMQ3BanQ,oU6FnPOSQS+kCV/HY5y5yA,,,N,0,0,,,2012-06-20 10:14,2012-06-20 10:14,admin,admin,,,
198,83279,772,10419,794,0,0,N,N,N,CP_Drtn,TT_Mile,DT_FixedDrtn,RV_OK,TK_NotStart,PRS21,Issue Structural Material P.O's ( Gupco Responsability),,0,64,0,0,0,0,0,0,0,0,2012-02-07 08:00,,,2012-02-07 08:00,2012-02-07 08:00,,2012-02-07 08:00,2012-02-07 08:00,2012-02-07 08:00,2012-02-07 08:00,2012-02-07 08:00,2012-02-07 08:00,,2012-02-07 08:00,2012-02-07 08:00,CS_MSO,PT_Normal,,,,,5z/L2/ncC0GpHNP7pCWdLg,xF9X1iufT72bd1+OFKWOyQ,,,N,0,0,,,2012-06-20 10:14,2012-06-20 10:14,admin,admin,,,
199,83280,772,10419,794,0,0,N,N,N,CP_Drtn,TT_Mile,DT_FixedDrtn,RV_OK,TK_NotStart,PRS22,Issue LC ( Gupco Responsability),,0,0,0,0,0,0,0,0,0,0,2012-02-15 08:00,,,2012-02-15 08:00,2012-02-15 08:00,,2012-02-15 08:00,2012-02-15 08:00,2012-02-15 08:00,2012-02-15 08:00,2012-02-15 08:00,2012-02-15 08:00,,2012-02-15 08:00,2012-02-15 08:00,CS_MSO,PT_Normal,,,,,ywrdP96oJUKg9boKC4PMcQ,um/v71UCSm2K8HwIWZ36mg,,,Y,0,0,,,2012-06-20 10:14,2012-06-20 10:14,admin,admin,,,
200,83281,772,10419,794,1,0,N,N,N,CP_Drtn,TT_Task,DT_FixedDUR2,RV_OK,TK_NotStart,PRS24,Delivery of Structure Material at Site (4 Wks.),,0,0,224,0,0,0,224,0,0,0,,,,2012-05-16 08:00,2012-06-12 17:00,,2012-05-16 08:00,2012-06-12 17:00,2012-05-16 08:00,2012-06-12 17:00,2012-05-16 08:00,2012-06-12 17:00,,2012-05-16 08:00,2012-06-12 17:00,,PT_Normal,,,,,LZPZUQy8Lk2ND3mj8ajJuQ,FqPfFJhLQ+SL9TfNEDcs7w,,,Y,0,0,,,2012-06-20 10:14,2012-06-20 10:14,admin,admin,,,
201,83282,772,10420,794,1,0,N,N,N,CP_Drtn,TT_Task,DT_FixedDrtn,RV_OK,TK_NotStart,PRP21,"Pipeline 18"""" & Fittings",,0,0,408,0,0,0,408,0,0,0,2012-05-31 08:00,,,2012-05-31 08:00,2012-07-20 17:00,,2012-05-31 08:00,2012-07-20 17:00,2012-05-31 08:00,2012-07-20 17:00,2012-05-31 08:00,2012-07-20 17:00,,2012-05-31 08:00,2012-07-20 17:00,CS_MSO,PT_Normal,,,,,p0i0F5M6kU6C3Dtdz7SmgA,8zKzqtp8RUKmTAsXxykRFA,,,N,0,0,,,2012-06-20 10:14,2012-06-20 10:14,admin,admin,,,
202,83283,772,10420,794,1,0,N,N,N,CP_Drtn,TT_Task,DT_FixedDrtn,RV_OK,TK_NotStart,PRP42,"Pipeline 8"""" & Fittings",,-0.016667,351,408,0,0,0,408,0,0,0,2012-05-30 17:00,,,2012-05-30 16:59,2012-07-20 16:59,,2012-05-31 08:00,2012-07-20 17:00,2012-05-31 08:00,2012-07-20 17:00,2012-05-31 08:00,2012-07-20 17:00,,2012-05-30 16:59,2012-07-20 16:59,CS_MSO,PT_Normal,,,,,vstMkMuTn0+vR12V93NwuQ,Z/LKROCTRSGDBSNh6tw23g,,,N,0,0,,,2012-06-20 10:14,2012-06-20 10:14,admin,admin,,,
203,83284,772,10422,794,1,0,N,N,N,CP_Drtn,TT_Task,DT_FixedDUR2,RV_OK,TK_NotStart,PRE27,Radar system,,-0.016667,904,240,0,0,0,240,0,0,0,2012-06-19 17:00,,,2012-06-19 16:59,2012-07-19 16:59,,2012-06-20 08:00,2012-07-19 17:00,2012-06-20 08:00,2012-07-19 17:00,2012-06-20 08:00,2012-07-19 17:00,,2012-06-19 16:59,2012-07-19 16:59,CS_MSO,PT_Normal,,,,,+H5os3a8CE+Fq9+htUVCkA,fN9/pTqqS/2bIA0m5B7Ztw,,,N,0,0,,,2012-06-20 10:14,2012-06-20 10:14,admin,admin,,,
204,83285,772,10422,794,1,0,N,N,N,CP_Drtn,TT_Task,DT_FixedDUR2,RV_OK,TK_NotStart,PRE28,Navegation Aids,,-0.016667,1384,360,0,0,0,360,0,0,0,2012-04-05 17:00,,,2012-04-05 16:59,2012-05-20 16:59,,2012-04-06 08:00,2012-05-20 17:00,2012-04-06 08:00,2012-05-20 17:00,2012-04-06 08:00,2012-05-20 17:00,,2012-04-05 16:59,2012-05-20 16:59,CS_MSO,PT_Normal,,,,,vKzDY1Az9kaoZ673HpGyWg,/agS5N51QBGq3ZFFA4yHkQ,,,N,0,0,,,2012-06-20 10:14,2012-06-20 10:14,admin,admin,,,
205,83286,772,10423,794,1,0,N,N,N,CP_Drtn,TT_Task,DT_FixedDUR2,RV_OK,TK_NotStart,PRE41,Electrical Bulks,,-0.016667,512,360,0,0,0,360,0,0,0,2012-07-23 17:00,,,2012-07-23 16:59,2012-09-06 16:59,,2012-07-24 08:00,2012-09-06 17:00,2012-07-24 08:00,2012-09-06 17:00,2012-07-24 08:00,2012-09-06 17:00,,2012-07-23 16:59,2012-09-06 16:59,CS_MSO,PT_Normal,,,,,M4wlNy0IBkWG5+qLSntvlQ,vQ/i5SbETo6/zhp0lbrKxA,,,N,0,0,,,2012-06-20 10:14,2012-06-20 10:14,admin,admin,,,
206,83287,772,10423,794,1,0,N,N,N,CP_Drtn,TT_Task,DT_FixedDUR2,RV_OK,TK_NotStart,PRE42,Cathodic Protection,,-0.016667,1000,360,0,0,0,360,0,0,0,2012-05-23 17:00,,,2012-05-23 16:59,2012-07-07 16:59,,2012-05-24 08:00,2012-07-07 17:00,2012-05-24 08:00,2012-07-07 17:00,2012-05-24 08:00,2012-07-07 17:00,,2012-05-23 16:59,2012-07-07 16:59,CS_MSO,PT_Normal,,,,,lNR1BCocFkiKRcD1F3QFOw,Iw4lArETRiW8xPu6VxnShg,,,N,0,0,,,2012-06-20 10:14,2012-06-20 10:14,admin,admin,,,
207,83288,772,10423,794,1,0,N,N,N,CP_Drtn,TT_Task,DT_FixedDUR2,RV_OK,TK_NotStart,PRE43,Solar Power,,-0.016667,912,360,0,0,0,360,0,0,0,2012-06-03 17:00,,,2012-06-03 16:59,2012-07-18 16:59,,2012-06-04 08:00,2012-07-18 17:00,2012-06-04 08:00,2012-07-18 17:00,2012-06-04 08:00,2012-07-18 17:00,,2012-06-03 16:59,2012-07-18 16:59,CS_MSO,PT_Normal,,,,,/8wpZDq8ukuL5v7nJrDyVQ,VN0an5lGRoaFh0fMNvkkFA,,,N,0,0,,,2012-06-20 10:14,2012-06-20 10:14,admin,admin,,,
208,83289,772,10424,794,1,0,N,N,N,CP_Drtn,TT_Task,DT_FixedDUR2,RV_OK,TK_NotStart,PRE24,F&G Detector,,-0.016667,648,360,0,0,0,360,0,0,0,2012-07-06 17:00,,,2012-07-06 16:59,2012-08-20 16:59,,2012-07-07 08:00,2012-08-20 17:00,2012-07-07 08:00,2012-08-20 17:00,2012-07-07 08:00,2012-08-20 17:00,,2012-07-06 16:59,2012-08-20 16:59,CS_MSO,PT_Normal,,,,,mGS8BZoNQUqj+2mJ+PQb8Q,VSwOK9yIRUSoxROQDvdw7g,,,N,0,0,,,2012-06-20 10:14,2012-06-20 10:14,admin,admin,,,
209,83290,772,10424,794,1,0,N,N,N,CP_Drtn,TT_Task,DT_FixedDUR2,RV_OK,TK_NotStart,PRE25,Fire fighting system,,-0.016667,720,360,0,0,0,360,0,0,0,2012-06-27 17:00,,,2012-06-27 16:59,2012-08-11 16:59,,2012-06-28 08:00,2012-08-11 17:00,2012-06-28 08:00,2012-08-11 17:00,2012-06-28 08:00,2012-08-11 17:00,,2012-06-27 16:59,2012-08-11 16:59,CS_MSO,PT_Normal,,,,,PFEkpgrSgUerdVphWd3VoA,tpzm+A81SOKv9OzobhMGlw,,,N,0,0,,,2012-06-20 10:14,2012-06-20 10:14,admin,admin,,,
210,83291,772,10424,794,1,0,N,N,N,CP_Drtn,TT_Task,DT_FixedDUR2,RV_OK,TK_NotStart,PRE26,Life Saving Equipment,,-0.016667,664,360,0,0,0,360,0,0,0,2012-07-04 17:00,,,2012-07-04 16:59,2012-08-18 16:59,,2012-07-05 08:00,2012-08-18 17:00,2012-07-05 08:00,2012-08-18 17:00,2012-07-05 08:00,2012-08-18 17:00,,2012-07-04 16:59,2012-08-18 16:59,CS_MSO,PT_Normal,,,,,op2Ha5raTkS3EKUTDXcYQg,KFlMp1iuR7Ggn/R36j8DNg,,,N,0,0,,,2012-06-20 10:14,2012-06-20 10:14,admin,admin,,,
211,83292,772,10425,794,1,0,N,N,N,CP_Drtn,TT_Task,DT_FixedDUR2,RV_OK,TK_NotStart,PRE29,Instrument Electical Bulk,,-0.016667,624,240,0,0,0,240,0,0,0,2012-07-24 17:00,,,2012-07-24 16:59,2012-08-23 16:59,,2012-07-25 08:00,2012-08-23 17:00,2012-07-25 08:00,2012-08-23 17:00,2012-07-25 08:00,2012-08-23 17:00,,2012-07-24 16:59,2012-08-23 16:59,CS_MSO,PT_Normal,,,,,KFfYujk/zEGG361wZHUs3A,nbERwAGrT3emToa6M54rSw,,,N,0,0,,,2012-06-20 10:14,2012-06-20 10:14,admin,admin,,,
212,83293,772,10425,794,1,0,N,N,N,CP_Drtn,TT_Task,DT_FixedDUR2,RV_OK,TK_NotStart,PRE30,Instrument Mechanical Bulk,,-0.016667,640,280,0,0,0,280,0,0,0,2012-07-17 17:00,,,2012-07-17 16:59,2012-08-21 16:59,,2012-07-18 08:00,2012-08-21 17:00,2012-07-18 08:00,2012-08-21 17:00,2012-07-18 08:00,2012-08-21 17:00,,2012-07-17 16:59,2012-08-21 16:59,CS_MSO,PT_Normal,,,,,IshoWY9Bg0ihvwPyk+OPPQ,I5ckdTYuQTKukOCM1JedFw,,,N,0,0,,,2012-06-20 10:14,2012-06-20 10:14,admin,admin,,,
213,83294,772,10425,794,1,0,N,N,N,CP_Drtn,TT_Task,DT_FixedDUR2,RV_OK,TK_NotStart,PRE51,Field Instrument,,-0.016667,760,360,0,0,0,360,0,0,0,2012-06-22 17:00,,,2012-06-22 16:59,2012-08-06 16:59,,2012-06-23 08:00,2012-08-06 17:00,2012-06-23 08:00,2012-08-06 17:00,2012-06-23 08:00,2012-08-06 17:00,,2012-06-22 16:59,2012-08-06 16:59,CS_MSO,PT_Normal,,,,,tHLnZ86V5ECeMQqxpRnoyw,M/41QxsNRJS7+vZ1Rp7jJg,,,N,0,0,,,2012-06-20 10:14,2012-06-20 10:14,admin,admin,,,
214,83295,772,10425,794,1,0,N,N,N,CP_Drtn,TT_Task,DT_FixedDUR2,RV_OK,TK_NotStart,PRE52,multi phase flow meter,,-0.016667,1095,456,0,0,0,456,0,0,0,2012-07-17 17:00,,,2012-07-17 16:59,2012-09-12 16:59,,2012-07-18 08:00,2012-09-12 17:00,2012-07-18 08:00,2012-09-12 17:00,2012-07-18 08:00,2012-09-12 17:00,,2012-07-17 16:59,2012-09-12 16:59,CS_MSO,PT_Normal,,,,,4pt0+McuK02Ref2G6D0+rA,VbJvQNUwQvmr5G5TNU296w,,,N,0,0,,,2012-06-20 10:14,2012-06-20 10:14,admin,admin,,,
215,83296,772,10425,794,1,0,N,N,N,CP_Drtn,TT_Task,DT_FixedDUR2,RV_OK,TK_NotStart,PRE53,Safe Guard system,,-0.016667,1063,240,0,0,0,240,0,0,0,2012-08-17 17:00,,,2012-08-17 16:59,2012-09-16 16:59,,2012-08-18 08:00,2012-09-16 17:00,2012-08-18 08:00,2012-09-16 17:00,2012-08-18 08:00,2012-09-16 17:00,,2012-08-17 16:59,2012-09-16 16:59,CS_MSO,PT_Normal,,,,,d91fFUhtckW4aGxqWihE0A,jReSS16pSoan6pMZsdEk8g,,,N,0,0,,,2012-06-20 10:14,2012-06-20 10:14,admin,admin,,,
216,83297,772,10427,841,1,0,N,N,N,CP_Drtn,TT_Task,DT_FixedDUR2,RV_OK,TK_NotStart,JK21,"Jacket , Boat Landing Fabrication & Painting",,208,0,1400,0,0,0,1400,0,0,0,,,,2012-07-22 08:00,2013-02-24 16:00,,2012-06-21 08:00,2013-01-22 16:00,2012-06-21 08:00,2013-01-22 16:00,2012-06-21 08:00,2013-01-22 16:00,,2012-07-22 08:00,2013-02-24 16:00,,PT_Normal,,,,,x7aHGYVmX069LbdmmPpImQ,MJjexNjLRy6cxfkloFqepA,,,N,0,0,,,2012-06-20 10:14,2012-06-20 10:14,admin,admin,,,
217,83298,772,10427,841,1,0,N,N,N,CP_Drtn,TT_Task,DT_FixedDUR2,RV_OK,TK_NotStart,JK22,Piles Fabrication & Marking,,592,592,1000,0,0,0,1000,0,0,0,,,,2012-11-08 08:00,2013-04-07 16:00,,2012-08-06 08:00,2013-01-08 16:00,2012-08-06 08:00,2013-01-08 16:00,2012-08-06 08:00,2013-01-08 16:00,,2012-11-08 08:00,2013-04-07 16:00,,PT_Normal,,,,,hW1mWw2J60WLQhvHmriuAw,cmwt03k5QUWVZ2X2eta6kg,,,N,0,0,,,2012-06-20 10:14,2012-06-20 10:14,admin,admin,,,
218,83299,772,10429,841,1,0,N,N,N,CP_Drtn,TT_Task,DT_FixedDUR2,RV_OK,TK_NotStart,DS021,Fabrication and Painting of Below Production Deck/Legs,,0,0,840,0,0,0,840,0,0,0,,,,2012-06-13 08:00,2012-10-18 16:00,,2012-06-13 08:00,2012-10-18 16:00,2012-06-13 08:00,2012-10-18 16:00,2012-06-13 08:00,2012-10-18 16:00,,2012-06-13 08:00,2012-10-18 16:00,,PT_Normal,,,,,npeqxAvVYEKoBN4z/GTyDw,YDhnGt4WSampcAcCK/B2gQ,,,Y,0,0,,,2012-06-20 10:14,2012-06-20 10:14,admin,admin,,,
219,83300,772,10429,841,1,0,N,N,N,CP_Drtn,TT_Task,DT_FixedDUR2,RV_OK,TK_NotStart,DS022,Fabrication and Painting of Production Deck,,0,0,960,0,0,0,960,0,0,0,,,,2012-06-13 08:00,2012-11-08 16:00,,2012-06-13 08:00,2012-11-08 16:00,2012-06-13 08:00,2012-11-08 16:00,2012-06-13 08:00,2012-11-08 16:00,,2012-06-13 08:00,2012-11-08 16:00,,PT_Normal,,,,,qu+IWOXMGkSJh2uc7ERxAA,xFi93CoKSi++4GmIMxpP9w,,,Y,0,0,,,2012-06-20 10:14,2012-06-20 10:14,admin,admin,,,
220,83301,772,10429,841,1,0,N,N,N,CP_Drtn,TT_Task,DT_FixedDUR2,RV_OK,TK_NotStart,DS023,Fabrication and Paint of Heli-Deck ( & Lifting if Required),,400,0,960,0,0,0,960,0,0,0,,,,2012-10-29 08:00,2013-03-21 16:00,,2012-08-27 08:00,2013-01-20 16:00,2012-08-27 08:00,2013-01-20 16:00,2012-08-27 08:00,2013-01-20 16:00,,2012-10-29 08:00,2013-03-21 16:00,,PT_Normal,,,,,HtpKQno7Eki2cp11dpWmqw,rvAg4dTFTzOC9LQPbMvlVA,,,N,0,0,,,2012-06-20 10:14,2012-06-20 10:14,admin,admin,,,
221,83302,772,10429,841,1,0,N,N,N,CP_Drtn,TT_Task,DT_FixedDUR2,RV_OK,TK_NotStart,DS024,Lifting Below Production Deck on High Cups,,24,0,40,0,0,0,40,0,0,0,,,,2012-10-23 08:00,2012-10-31 16:00,,2012-10-20 08:00,2012-10-24 16:00,2012-10-20 08:00,2012-10-24 16:00,2012-10-20 08:00,2012-10-24 16:00,,2012-10-23 08:00,2012-10-31 16:00,,PT_Normal,,,,,wt2SKo5HV0mG6azX31iZ7g,bQ+CxC0TQriVcwNqie/vXQ,,,N,0,0,,,2012-06-20 10:14,2012-06-20 10:14,admin,admin,,,
222,83303,772,10429,841,1,0,N,N,N,CP_Drtn,TT_Task,DT_FixedDUR2,RV_OK,TK_NotStart,DS025,Lifting Production Deck on Below Production Level,,0,0,120,0,0,0,120,0,0,0,,,,2012-11-10 08:00,2012-11-27 16:00,,2012-11-10 08:00,2012-11-27 16:00,2012-11-10 08:00,2012-11-27 16:00,2012-11-10 08:00,2012-11-27 16:00,,2012-11-10 08:00,2012-11-27 16:00,,PT_Normal,,,,,0/c6NcVfw0qaGccamSKt5g,kvv6UChdRT2TML26fqP2Og,,,Y,0,0,,,2012-06-20 10:14,2012-06-20 10:14,admin,admin,,,
223,83304,772,10429,841,1,0,N,N,N,CP_Drtn,TT_Task,DT_FixedDUR2,RV_OK,TK_NotStart,DS026,Fabrication & Installation of Deck Str. Miscellence / Padeyes,,80,24,960,0,0,0,960,0,0,0,,,,2012-10-17 08:00,2013-03-13 16:00,,2012-10-04 08:00,2013-03-02 16:00,2012-10-04 08:00,2013-03-02 16:00,2012-10-04 08:00,2013-03-02 16:00,,2012-10-17 08:00,2013-03-13 16:00,,PT_Normal,,,,,Hu/1InGWYEiuv5rBxJuBPg,CWEx43mfRrCS6ZOEt8Q5OA,,,N,0,0,,,2012-06-20 10:14,2012-06-20 10:14,admin,admin,,,
224,83305,772,10429,841,0,0,N,N,N,CP_Drtn,TT_FinMile,DT_FixedDrtn,RV_OK,TK_NotStart,DS027,Physical Weighting,,80,0,0,0,0,0,0,0,0,0,,,,2013-03-06 16:00,2013-03-06 16:00,,2013-02-23 16:00,2013-02-23 16:00,2013-02-23 16:00,2013-02-23 16:00,2013-02-23 16:00,2013-02-23 16:00,,2013-03-06 16:00,2013-03-06 16:00,,PT_Normal,,,,,bUH+299/gkG52h7TkAMZog,dU19c7ngSBGK2PpNjJWMWA,,,N,0,0,,,2012-06-20 10:14,2012-06-20 10:14,admin,admin,,,
225,83306,772,10429,841,1,0,N,N,N,CP_Drtn,TT_Task,DT_FixedDUR2,RV_OK,TK_NotStart,DS028,Clearanse of structure (Fab. & Painting ) Punch List,,56,56,168,0,0,0,168,0,0,0,,,,2013-03-14 08:00,2013-04-07 16:00,,2013-03-06 08:00,2013-03-30 16:00,2013-03-06 08:00,2013-03-30 16:00,2013-03-06 08:00,2013-03-30 16:00,,2013-03-14 08:00,2013-04-07 16:00,,PT_Normal,,,,,gVQ1rzk7ikyfQa7pAPG1jQ,2xbSngZtS1yuYdYRZesY/A,,,N,0,0,,,2012-06-20 10:14,2012-06-20 10:14,admin,admin,,,
226,83307,772,10431,841,1,0,N,N,N,CP_Drtn,TT_Task,DT_FixedDUR2,RV_OK,TK_NotStart,TFS021,Piping and Piping Supports Fabrication and Painting,,320,320,800,0,0,0,800,0,0,0,,,,2012-09-10 08:00,2013-01-10 16:00,,2012-07-21 08:00,2012-11-24 16:00,2012-07-21 08:00,2012-11-24 16:00,2012-07-21 08:00,2012-11-24 16:00,,2012-09-10 08:00,2013-01-10 16:00,,PT_Normal,,,,,LGBl1bwniUWGQbUV1/Y+ew,MmyOxGLAQBKzrY9ic24SKw,,,N,0,0,,,2012-06-20 10:14,2012-06-20 10:14,admin,admin,,,
227,83308,772,10431,841,1,0,N,N,N,CP_Drtn,TT_Task,DT_FixedDUR2,RV_OK,TK_NotStart,TSF022,Piping and Piping Supports Erection,,0,0,600,0,0,0,600,0,0,0,,,,2012-11-25 08:00,2013-02-23 16:00,,2012-11-25 08:00,2013-02-23 16:00,2012-11-25 08:00,2013-02-23 16:00,2012-11-25 08:00,2013-02-23 16:00,,2012-11-25 08:00,2013-02-23 16:00,,PT_Normal,,,,,95zvLucGD0OdMOa5ra92/Q,sdcBHYglTkmbL+zUfSnz1Q,,,Y,0,0,,,2012-06-20 10:14,2012-06-20 10:14,admin,admin,,,
228,83309,772,10432,841,1,0,N,N,N,CP_Drtn,TT_Task,DT_FixedDUR2,RV_OK,TK_NotStart,TSF023,Equipment Erection on Below Production Level,,24,24,56,0,0,0,56,0,0,0,,,,2012-11-01 08:00,2012-11-08 16:00,,2012-10-29 08:00,2012-11-05 16:00,2012-10-29 08:00,2012-11-05 16:00,2012-10-29 08:00,2012-11-05 16:00,,2012-11-01 08:00,2012-11-08 16:00,,PT_Normal,,,,,8xn0wZ7jsE+62k7HIDWIBQ,z1CTK+RVT2ODKyZP+ZU/NQ,,,N,0,0,,,2012-06-20 10:14,2012-06-20 10:14,admin,admin,,,
229,83310,772,10432,841,1,0,N,N,N,CP_Drtn,TT_Task,DT_FixedDUR2,RV_OK,TK_NotStart,TSF024,Equipment Erection on Production Level,,216,216,120,0,0,0,120,0,0,0,,,,2012-12-30 08:00,2013-01-16 16:00,,2012-11-28 08:00,2012-12-15 16:00,2012-11-28 08:00,2012-12-15 16:00,2012-11-28 08:00,2012-12-15 16:00,,2012-12-30 08:00,2013-01-16 16:00,,PT_Normal,,,,,KU3/LLt02Um/sCIp4/LfZQ,uRd8e2PwTCikyeTQ2cwlXg,,,N,0,0,,,2012-06-20 10:14,2012-06-20 10:14,admin,admin,,,
230,83311,772,10432,841,1,0,N,N,N,CP_Drtn,TT_Task,DT_FixedDUR2,RV_OK,TK_NotStart,TSF025,Equipment Erection on Helideck,,400,400,56,0,0,0,56,0,0,0,,,,2013-02-16 08:00,2013-02-23 16:00,,2012-12-16 08:00,2012-12-23 16:00,2012-12-16 08:00,2012-12-23 16:00,2012-12-16 08:00,2012-12-23 16:00,,2013-02-16 08:00,2013-02-23 16:00,,PT_Normal,,,,,KQ4fE+gJSky7GNeeDoeaCw,aPJaRDLhRCS2fQT2L4W4XQ,,,N,0,0,,,2012-06-20 10:14,2012-06-20 10:14,admin,admin,,,
231,83312,772,10433,841,1,0,N,N,N,CP_Drtn,TT_Task,DT_FixedDUR2,RV_OK,TK_NotStart,TS27,E&I Activity,,16,16,720,0,0,0,720,0,0,0,,,,2012-11-12 08:00,2013-02-28 16:00,,2012-11-10 08:00,2013-02-26 16:00,2012-11-10 08:00,2013-02-26 16:00,2012-11-10 08:00,2013-02-26 16:00,,2012-11-12 08:00,2013-02-28 16:00,,PT_Normal,,,,,ayoB8h2kpESWBnvJ0xTJ1g,wsdfJJRZTh6vVDGXiSaIkQ,,,N,0,0,,,2012-06-20 10:14,2012-06-20 10:14,admin,admin,,,
232,83313,772,10434,841,1,0,N,N,N,CP_Drtn,TT_Task,DT_FixedDUR2,RV_OK,TK_NotStart,TS28,"Pre-commissioning """" Piping Hydrotest , Reinstatment , Megering , Continuity Test and Touch Up """"",,0,0,280,0,0,0,280,0,0,0,,,,2013-02-18 08:00,2013-03-30 16:00,,2013-02-18 08:00,2013-03-30 16:00,2013-02-18 08:00,2013-03-30 16:00,2013-02-18 08:00,2013-03-30 16:00,,2013-02-18 08:00,2013-03-30 16:00,,PT_Normal,,,,,y34WCKV77U6HxxMiA4EChQ,lPjrgJbBSWyVdJYtkd0lWQ,,,Y,0,0,,,2012-06-20 10:14,2012-06-20 10:14,admin,admin,,,
233,83314,772,10435,841,1,0,N,N,N,CP_Drtn,TT_Task,DT_FixedDUR2,RV_OK,TK_NotStart,PL21,P/L Spools Fabrication,,832,0,720,0,0,0,720,0,0,0,,,,2012-11-07 08:00,2013-02-24 16:00,,2012-06-30 08:00,2012-10-17 16:00,2012-06-30 08:00,2012-10-17 16:00,2012-06-30 08:00,2012-10-17 16:00,,2012-11-07 08:00,2013-02-24 16:00,,PT_Normal,,,,,OFaZGqanZU+jKrLDSj6BOA,HLJPh8QQQuqRB3kePFiOKw,,,N,0,0,,,2012-06-20 10:14,2012-06-20 10:14,admin,admin,,,
234,83315,772,10437,841,0,0,N,N,N,CP_Drtn,TT_Mile,DT_FixedDrtn,RV_OK,TK_NotStart,LOPS21,Arrival of 01st Shipment Material Barge ( P/L Spools),,0,128,0,0,0,0,0,0,0,0,2012-09-15 08:00,,,2012-09-15 08:00,2012-09-15 08:00,,2012-09-15 08:00,2012-09-15 08:00,2012-09-15 08:00,2012-09-15 08:00,2012-09-15 08:00,2012-09-15 08:00,,2012-09-15 08:00,2012-09-15 08:00,CS_MSO,PT_Normal,,,,,OzUFIPks302wsyR+uazpaQ,B4Hx/kkxQZKPJEG8DiZMqQ,,,N,0,0,,,2012-06-20 10:14,2012-06-20 10:14,admin,admin,,,
235,83316,772,10437,841,1,0,N,N,N,CP_Drtn,TT_Task,DT_FixedDUR2,RV_OK,TK_NotStart,LOPS22,1st Shipment Material Barge Preparation,,1088,0,96,0,0,0,96,0,0,0,,,,2013-03-20 08:00,2013-04-02 16:00,,2012-10-03 08:00,2012-10-17 16:00,2012-10-03 08:00,2012-10-17 16:00,2012-10-03 08:00,2012-10-17 16:00,,2013-03-20 08:00,2013-04-02 16:00,,PT_Normal,,,,,hG7/16szS0WaIWMhbYJ4Sw,ffJmeitJThGKpY3WVSZDNQ,,,N,0,0,,,2012-06-20 10:14,2012-06-20 10:14,admin,admin,,,
236,83317,772,10437,841,1,0,N,N,N,CP_Drtn,TT_Task,DT_FixedDUR2,RV_OK,TK_NotStart,LOPS23,"L/O & Sea Fastening (P/L Spools 18"""" & 8"""")",,1088,0,32,0,0,0,32,0,0,0,,,,2013-04-03 08:00,2013-04-07 16:00,,2012-10-18 08:00,2012-10-22 16:00,2012-10-18 08:00,2012-10-22 16:00,2012-10-18 08:00,2012-10-22 16:00,,2013-04-03 08:00,2013-04-07 16:00,,PT_Normal,,,,,9X0C/NlmhEKajjVgmtxwCQ,0IwOiWOuTGWgp9eZJV76QQ,,,N,0,0,,,2012-06-20 10:14,2012-06-20 10:14,admin,admin,,,
237,83318,772,10438,841,0,0,N,N,N,CP_Drtn,TT_Mile,DT_FixedDrtn,RV_OK,TK_NotStart,LOJK21,Arrival of 02nd Shipment Material Barge ( Jacket and Piles ),,0,263.983333,0,0,0,0,0,0,0,0,2012-12-01 08:01,,,2012-12-01 08:01,2012-12-01 08:01,,2012-12-01 08:01,2012-12-01 08:01,2012-12-01 08:01,2012-12-01 08:01,2012-12-01 08:01,2012-12-01 08:01,,2012-12-01 08:01,2012-12-01 08:01,CS_MSO,PT_Normal,,,,,/YqSb2uDrUy1yz+LqhHkBQ,TZSnzFwbTP2WYUW5WMHAXA,,,N,0,0,,,2012-06-20 10:14,2012-06-20 10:14,admin,admin,,,
238,83319,772,10438,841,1,0,N,N,N,CP_Drtn,TT_Task,DT_FixedDUR2,RV_OK,TK_NotStart,LOJK22,02nd Shipment Material Barge Preparation,,208,0,96,0,0,0,96,0,0,0,,,,2013-02-11 08:00,2013-02-24 16:00,,2013-01-09 08:00,2013-01-22 16:00,2013-01-09 08:00,2013-01-22 16:00,2013-01-09 08:00,2013-01-22 16:00,,2013-02-11 08:00,2013-02-24 16:00,,PT_Normal,,,,,ocSaukuEpkOIabB/W5qCDQ,XbtAi6jCTDyBXVHSpw5OSQ,,,N,0,0,,,2012-06-20 10:14,2012-06-20 10:14,admin,admin,,,
239,83320,772,10438,841,1,0,N,N,N,CP_Drtn,TT_Task,DT_FixedDUR2,RV_OK,TK_NotStart,LOJK23,L/O & Sea fastening ( Jacket & Piles ),,208,0,56,0,0,0,56,0,0,0,,,,2013-02-25 08:00,2013-03-04 16:00,,2013-01-23 08:00,2013-01-31 16:00,2013-01-23 08:00,2013-01-31 16:00,2013-01-23 08:00,2013-01-31 16:00,,2013-02-25 08:00,2013-03-04 16:00,,PT_Normal,,,,,/lwB05gFY0WNrD1Qr8RDPA,0h5qrf7kSZW3DGU5wFjrDw,,,N,0,0,,,2012-06-20 10:14,2012-06-20 10:14,admin,admin,,,
240,83321,772,10439,841,0,0,N,N,N,CP_Drtn,TT_Mile,DT_FixedDrtn,RV_OK,TK_NotStart,LODK21,Arrival of 03rd Shipment Material Barge ( Deck C/W TSF ),,-0.016667,104,0,0,0,0,0,0,0,0,2013-03-01 08:01,,,2013-02-28 15:59,2013-02-28 15:59,,2013-03-02 08:00,2013-03-02 08:00,2013-03-02 08:00,2013-03-02 08:00,2013-03-02 08:00,2013-03-02 08:00,,2013-02-28 15:59,2013-02-28 15:59,CS_MSO,PT_Normal,,,,,+bmImlAl+EeMuO3E8IZLbQ,ExIEDAbgRLSmFck0X+OxYg,,,N,0,0,,,2012-06-20 10:14,2012-06-20 10:14,admin,admin,,,
241,83322,772,10439,841,1,0,N,N,N,CP_Drtn,TT_Task,DT_FixedDUR2,RV_OK,TK_NotStart,LODK22,3rd Shipment Material Barge Preparation,,0,0,96,0,0,0,96,0,0,0,,,,2013-03-17 08:00,2013-03-30 16:00,,2013-03-17 08:00,2013-03-30 16:00,2013-03-17 08:00,2013-03-30 16:00,2013-03-17 08:00,2013-03-30 16:00,,2013-03-17 08:00,2013-03-30 16:00,,PT_Normal,,,,,bMaFX4P8DE6/oRnqQAQohg,lPDdUYuUTIydlmlcan93BQ,,,Y,0,0,,,2012-06-20 10:14,2012-06-20 10:14,admin,admin,,,
242,83323,772,10439,841,1,0,N,N,N,CP_Drtn,TT_Task,DT_FixedDUR2,RV_OK,TK_NotStart,LODK23,L/O & Sea fastening ( Deck),,0,0,56,0,0,0,56,0,0,0,,,,2013-03-31 08:00,2013-04-07 16:00,,2013-03-31 08:00,2013-04-07 16:00,2013-03-31 08:00,2013-04-07 16:00,2013-03-31 08:00,2013-04-07 16:00,,2013-03-31 08:00,2013-04-07 16:00,,PT_Normal,,,,,spE5xHjDeUSbwXz8P4JYbA,a29m8wZtSbmmAh/FPoIQAw,,,Y,0,0,,,2012-06-20 10:14,2012-06-20 10:14,admin,admin,,,
243,83324,772,10420,794,1,0,N,N,N,CP_Drtn,TT_Task,DT_FixedDrtn,RV_OK,TK_NotStart,PRP52,"Pipeline 8"""" & Fittings",,-0.016667,2087,408,0,0,0,408,0,0,0,2012-05-30 17:00,,,2012-05-30 16:59,2012-07-20 16:59,,2012-05-31 08:00,2012-07-20 17:00,2012-05-31 08:00,2012-07-20 17:00,2012-05-31 08:00,2012-07-20 17:00,,2012-05-30 16:59,2012-07-20 16:59,CS_MSO,PT_Normal,,,,,0fNbqD1XtEi5xBrBPq70LQ,tjm2mx2cUUyxd/Z8deMfQA,,,N,0,0,,,2012-06-20 10:14,2012-06-20 10:14,admin,admin,,,
244,83325,772,10410,841,0,0,N,N,N,CP_Drtn,TT_FinMile,DT_FixedDrtn,RV_OK,TK_NotStart,GM31,Reciving Fax of Award,,-0.016667,0,0,0,0,0,0,0,0,0,2012-01-20 16:00,,,2012-01-19 16:00,2012-01-19 16:00,,2012-01-21 08:01,2012-01-21 08:01,2012-01-21 08:01,2012-01-21 08:01,2012-01-21 08:01,2012-01-21 08:01,,2012-01-19 16:00,2012-01-19 16:00,CS_MEO,PT_Normal,,,,,gPpKTmj4+kG8sV8xDWJGbQ,QntCRO6hKk2dGYdaC4jC+A,,,N,0,0,,,2012-06-20 10:14,2012-06-20 10:14,admin,admin,,,
245,83326,772,10410,841,0,0,N,N,N,CP_Drtn,TT_Mile,DT_FixedDrtn,RV_OK,TK_NotStart,GM32,Project Fab. Start,,1951.983333,1952,0,0,0,0,0,0,0,0,,,,2013-04-07 15:59,2013-04-07 15:59,,2012-06-13 08:00,2012-06-13 08:00,2012-06-13 08:00,2012-06-13 08:00,2012-06-13 08:00,2012-06-13 08:00,,2013-04-07 15:59,2013-04-07 15:59,,PT_Normal,,,,,xA57bC3bzUSE+4b07iylGg,BLyTuTslCE6HWg/1RLrlRA,,,N,0,0,,,2012-06-20 10:14,2012-06-20 10:14,admin,admin,,,
246,83327,772,10410,841,0,0,N,N,N,CP_Drtn,TT_Mile,DT_FixedDrtn,RV_OK,TK_NotStart,GM34,Ready for Load out ( 02nd Shipment/ Jacket & Piles ),,208,208,0,0,0,0,0,0,0,0,,,,2013-02-25 08:00,2013-02-25 08:00,,2013-01-23 08:00,2013-01-23 08:00,2013-01-23 08:00,2013-01-23 08:00,2013-01-23 08:00,2013-01-23 08:00,,2013-02-25 08:00,2013-02-25 08:00,,PT_Normal,,,,,jq6o038Wj06c0JuixxuLjg,gFZONbWIK0C+nNXjlIz6uQ,,,N,0,0,,,2012-06-20 10:14,2012-06-20 10:14,admin,admin,,,
247,83328,772,10410,841,0,0,N,N,N,CP_Drtn,TT_Mile,DT_FixedDrtn,RV_OK,TK_NotStart,GM35,Ready for Load out ( 03rd Shipment/ Deck C/W TSF ),,55.983333,56,0,0,0,0,0,0,0,0,,,,2013-04-07 15:59,2013-04-07 15:59,,2013-03-31 08:00,2013-03-31 08:00,2013-03-31 08:00,2013-03-31 08:00,2013-03-31 08:00,2013-03-31 08:00,,2013-04-07 15:59,2013-04-07 15:59,,PT_Normal,,,,,ZZ4p/mkynkiBPta2B2hFjg,9s2ympvYOEiZvw5ljG+Kxw,,,N,0,0,,,2012-06-20 10:14,2012-06-20 10:14,admin,admin,,,
248,83329,772,10410,841,0,0,N,N,N,CP_Drtn,TT_Mile,DT_FixedDrtn,RV_OK,TK_NotStart,GM33,"Ready for Load out (01st Shipment / Pipeline Spools 18"""" & 8"""")",,1119.983333,1120,0,0,0,0,0,0,0,0,,,,2013-04-07 15:59,2013-04-07 15:59,,2012-10-18 08:00,2012-10-18 08:00,2012-10-18 08:00,2012-10-18 08:00,2012-10-18 08:00,2012-10-18 08:00,,2013-04-07 15:59,2013-04-07 15:59,,PT_Normal,,,,,hHcnJoeG6Uucw0hMtfU3nw,6hkgSxtQukaozXDsVGKVjA,,,N,0,0,,,2012-06-20 10:14,2012-06-20 10:14,admin,admin,,,
249,83330,772,10412,794,1,0,N,N,N,CP_Drtn,TT_Task,DT_FixedDrtn,RV_OK,TK_NotStart,ENS33,Receiving Jacket Primary & Secondary Steel IFC DWG`s,,0,0,1104,0,0,0,1104,0,0,0,2011-11-30 08:01,,,2011-11-30 08:01,2012-04-16 08:01,,2011-11-30 08:01,2012-04-16 08:01,2011-11-30 08:01,2012-04-16 08:01,2011-11-30 08:01,2012-04-16 08:01,,2011-11-30 08:01,2012-04-16 08:01,CS_MSO,PT_Normal,,,,,RB+qDyCRnk+tFCNx9UQChw,fQn8/D6rEUSlwSy++aYoQA,,,N,0,0,,,2012-06-20 10:14,2012-06-20 10:14,admin,admin,,,
250,83331,772,10412,794,0,0,N,N,N,CP_Drtn,TT_FinMile,DT_FixedDrtn,RV_OK,TK_NotStart,ENS34,Receiving Piles IFC DWG`s,,0,720,0,0,0,0,0,0,0,0,2012-01-17 08:01,,,2012-01-17 08:01,2012-01-17 08:01,,2012-01-17 08:01,2012-01-17 08:01,2012-01-17 08:01,2012-01-17 08:01,2012-01-17 08:01,2012-01-17 08:01,,2012-01-17 08:01,2012-01-17 08:01,CS_MEO,PT_Normal,,,,,YCrwDFXNh0OlsjW88FTHPQ,585mTWwaOUekmnE83+A1kg,,,N,0,0,,,2012-06-20 10:14,2012-06-20 10:14,admin,admin,,,
251,83332,772,10412,794,1,0,N,N,N,CP_Drtn,TT_Task,DT_FixedDUR2,RV_OK,TK_NotStart,ENS35,Receiving Deck Str. Primary & Secondary IFC DWG`s,,0,224,328,0,0,0,328,0,0,0,2012-02-07 08:01,,,2012-02-07 08:01,2012-03-19 08:01,,2012-02-07 08:01,2012-03-19 08:01,2012-02-07 08:01,2012-03-19 08:01,2012-02-07 08:01,2012-03-19 08:01,,2012-02-07 08:01,2012-03-19 08:01,CS_MSO,PT_Normal,,,,,ylnRbUYAaEGrgYpu1fJgZA,vDJwuFiedked97VMopq//w,,,N,0,0,,,2012-06-20 10:14,2012-06-20 10:14,admin,admin,,,
252,83333,772,10412,794,0,0,N,N,N,CP_Drtn,TT_FinMile,DT_FixedDrtn,RV_OK,TK_NotStart,ENS31,"Receiving Final Jacket , Boat Land & Piles MTO",,135.983333,135.983333,0,0,0,0,0,0,0,0,,,,2012-02-14 17:00,2012-02-14 17:00,,2012-01-29 08:01,2012-01-29 08:01,2012-01-29 08:01,2012-01-29 08:01,2012-01-29 08:01,2012-01-29 08:01,,2012-02-14 17:00,2012-02-14 17:00,,PT_Normal,,,,,ioi9rePjDESbtP6lyuyPfg,hfJ8sj6Ai02DimJPwXbdQw,,,N,0,0,,,2012-06-20 10:14,2012-06-20 10:14,admin,admin,,,
253,83334,772,10412,794,0,0,N,N,N,CP_Drtn,TT_FinMile,DT_FixedDrtn,RV_OK,TK_NotStart,ENS32,Receiving Final Deck Str. MTO,,135.983333,135.983333,0,0,0,0,0,0,0,0,,,,2012-02-14 17:00,2012-02-14 17:00,,2012-01-29 08:01,2012-01-29 08:01,2012-01-29 08:01,2012-01-29 08:01,2012-01-29 08:01,2012-01-29 08:01,,2012-02-14 17:00,2012-02-14 17:00,,PT_Normal,,,,,iRTiNajynkC9R5pQoDKJKA,0X6GOG/si0W/k3axqY1amw,,,N,0,0,,,2012-06-20 10:14,2012-06-20 10:14,admin,admin,,,
254,83335,772,10412,794,1,0,N,N,N,CP_Drtn,TT_Task,DT_FixedDrtn,RV_OK,TK_NotStart,ENS38,Receiving IFC Equipment fixation DWG`s,,0,1559.983333,104,0,0,0,104,0,0,0,2012-04-04 08:01,,,2012-04-04 08:01,2012-04-17 08:01,,2012-04-04 08:01,2012-04-17 08:01,2012-04-04 08:01,2012-04-17 08:01,2012-04-04 08:01,2012-04-17 08:01,,2012-04-04 08:01,2012-04-17 08:01,CS_MSO,PT_Normal,,,,,PNcovA9pJ06gV3zq+Y2nsg,IwC8dusvkkeoGNbz2wydyg,,,N,0,0,,,2012-06-20 10:14,2012-06-20 10:14,admin,admin,,,
255,83336,772,10412,794,1,0,N,N,N,CP_Drtn,TT_Task,DT_FixedDUR2,RV_OK,TK_NotStart,ENS36,Receiving Piping Supports IFC DWG's,,0,3078.983333,160,0,0,0,160,0,0,0,2012-02-28 08:01,,,2012-02-28 08:01,2012-03-19 08:01,,2012-02-28 08:01,2012-03-19 08:01,2012-02-28 08:01,2012-03-19 08:01,2012-02-28 08:01,2012-03-19 08:01,,2012-02-28 08:01,2012-03-19 08:01,CS_MSO,PT_Normal,,,,,INFKLWTt80mWRWlZbLuzNQ,fwqWJuI73UKeEIb3GJFIaA,,,N,0,0,,,2012-06-20 10:14,2012-06-20 10:14,admin,admin,,,
256,83337,772,10412,794,1,0,N,N,N,CP_Drtn,TT_Task,DT_FixedDUR2,RV_OK,TK_NotStart,ENS37,Receiving Cable tarys Support IFC DWG's,,0,3022.983333,104,0,0,0,104,0,0,0,2012-03-13 08:01,,,2012-03-13 08:01,2012-03-26 08:01,,2012-03-13 08:01,2012-03-26 08:01,2012-03-13 08:01,2012-03-26 08:01,2012-03-13 08:01,2012-03-26 08:01,,2012-03-13 08:01,2012-03-26 08:01,CS_MSO,PT_Normal,,,,,dlTTMCd8EEy/h1ho7u1l4w,uubwd56Wz0KTSuLtYlidjg,,,N,0,0,,,2012-06-20 10:14,2012-06-20 10:14,admin,admin,,,
257,83338,772,10412,794,1,0,N,N,N,CP_Drtn,TT_Task,DT_FixedDrtn,RV_OK,TK_NotStart,ENS39,"Receiving P/L 8"""" & 18"""" IFC DWG's",,0,2736,160,0,0,0,160,0,0,0,2012-04-10 16:00,,,2012-04-10 16:00,2012-04-30 16:00,,2012-04-10 16:00,2012-04-30 16:00,2012-04-10 16:00,2012-04-30 16:00,2012-04-10 16:00,2012-04-30 16:00,,2012-04-10 16:00,2012-04-30 16:00,CS_MSO,PT_Normal,,,,,AArvX820eUawozfLjK4SEQ,oIVfzDIEhEGkQBAOSFzBdQ,,,N,0,0,,,2012-06-20 10:14,2012-06-20 10:14,admin,admin,,,
258,83339,772,10413,794,1,0,N,N,N,CP_Drtn,TT_Task,DT_FixedDrtn,RV_OK,TK_NotStart,ENT33,Receiving Piping ISO`s IFC DWG's,,0,1047.983333,112,0,0,0,112,0,0,0,2012-02-27 08:01,,,2012-02-27 08:01,2012-03-12 08:01,,2012-02-27 08:01,2012-03-12 08:01,2012-02-27 08:01,2012-03-12 08:01,2012-02-27 08:01,2012-03-12 08:01,,2012-02-27 08:01,2012-03-12 08:01,CS_MSO,PT_Normal,,,,,LDTd3qilDEOZTxWcgwlrXw,EbAV7O3+0UWzxWiIdkWuwA,,,N,0,0,,,2012-06-20 10:14,2012-06-20 10:14,admin,admin,,,
259,83340,772,10413,794,0,0,N,N,N,CP_Drtn,TT_FinMile,DT_FixedDrtn,RV_OK,TK_NotStart,ENT31,Issue Approved P&ID's / Equipment List IFC DWG's,,0,3584,0,0,0,0,0,0,0,0,2012-01-15 16:00,,,2012-01-15 16:00,2012-01-15 16:00,,2012-01-15 16:00,2012-01-15 16:00,2012-01-15 16:00,2012-01-15 16:00,2012-01-15 16:00,2012-01-15 16:00,,2012-01-15 16:00,2012-01-15 16:00,CS_MEO,PT_Normal,,,,,ywDygzbNV0W0ylTVy/ODgw,aW4hUSQwQkyC6xUGkTqBNw,,,N,0,0,,,2012-06-20 10:14,2012-06-20 10:14,admin,admin,,,
260,83341,772,10413,794,0,0,N,N,N,CP_Drtn,TT_FinMile,DT_FixedDrtn,RV_OK,TK_NotStart,ENT32,Issue plat plans IFC DWG's,,0,3408,0,0,0,0,0,0,0,0,2012-02-06 16:00,,,2012-02-06 16:00,2012-02-06 16:00,,2012-02-06 16:00,2012-02-06 16:00,2012-02-06 16:00,2012-02-06 16:00,2012-02-06 16:00,2012-02-06 16:00,,2012-02-06 16:00,2012-02-06 16:00,CS_MEO,PT_Normal,,,,,sHcKIgpCCkmGl0R4eNBRIQ,BK+nLP810UCbJMC0LPk30g,,,N,0,0,,,2012-06-20 10:14,2012-06-20 10:14,admin,admin,,,
261,83342,772,10413,841,0,0,N,N,N,CP_Drtn,TT_FinMile,DT_FixedDrtn,RV_OK,TK_NotStart,ENT34,Issue Hydrotest maps & loops IFC DWG's,,0,2648,0,0,0,0,0,0,0,0,2012-02-28 16:00,,,2012-02-28 16:00,2012-02-28 16:00,,2012-02-28 16:00,2012-02-28 16:00,2012-02-28 16:00,2012-02-28 16:00,2012-02-28 16:00,2012-02-28 16:00,,2012-02-28 16:00,2012-02-28 16:00,CS_MEO,PT_Normal,,,,,Urc33YAxCkOdysp7xWGFfA,fHwgfAMtLECZ5IJXBmoKbw,,,N,0,0,,,2012-06-20 10:14,2012-06-20 10:14,admin,admin,,,
262,83343,772,10414,794,1,0,N,N,N,CP_Drtn,TT_Task,DT_FixedDUR2,RV_OK,TK_NotStart,ENE31,Receiving E&I IFC DWG`s,,0,2279.983333,776,0,0,0,776,0,0,0,2012-01-23 08:01,,,2012-01-23 08:01,2012-04-29 08:01,,2012-01-23 08:01,2012-04-29 08:01,2012-01-23 08:01,2012-04-29 08:01,2012-01-23 08:01,2012-04-29 08:01,,2012-01-23 08:01,2012-04-29 08:01,CS_MSO,PT_Normal,,,,,9TAi/YRVmkm+tO24HuLl4g,PBmCenI7YEKLp6iD84Cr7Q,,,N,0,0,,,2012-06-20 10:14,2012-06-20 10:14,admin,admin,,,
263,83344,772,10415,841,1,0,N,N,N,CP_Drtn,TT_Task,DT_FixedDUR2,RV_OK,TK_NotStart,PF31,Pre-Fabrication of Steel Structure ( Jacket & Piles),,208,0,960,0,0,0,960,0,0,0,,,,2012-07-14 08:00,2012-12-10 16:00,,2012-06-13 08:00,2012-11-08 16:00,2012-06-13 08:00,2012-11-08 16:00,2012-06-13 08:00,2012-11-08 16:00,,2012-07-14 08:00,2012-12-10 16:00,,PT_Normal,,,,,494qaepFC024t5w0KySWhw,BXGh6gKxm0iB+B+N2Cm2ag,,,N,0,0,,,2012-06-20 10:14,2012-06-20 10:14,admin,admin,,,
264,83345,772,10417,794,1,0,N,N,N,CP_Drtn,TT_Task,DT_FixedDUR2,RV_OK,TK_NotStart,PRT61,Piping Bulk material 1st batch,,-0.016667,536,240,0,0,0,240,0,0,0,2012-05-07 17:00,,,2012-05-07 16:59,2012-06-06 16:59,,2012-05-08 08:00,2012-06-06 17:00,2012-05-08 08:00,2012-06-06 17:00,2012-05-08 08:00,2012-06-06 17:00,,2012-05-07 16:59,2012-06-06 16:59,CS_MSO,PT_Normal,,,,,SqmWARViO0SO8hh+7n6Z7w,mlVZd8jlMk6fm6lMahemSA,,,N,0,0,,,2012-06-20 10:14,2012-06-20 10:14,admin,admin,,,
265,83346,772,10417,794,1,0,N,N,N,CP_Drtn,TT_Task,DT_FixedDUR2,RV_OK,TK_NotStart,PRT62,Piping Bulk material 2nd batch,,-0.016667,855,240,0,0,0,240,0,0,0,2012-06-10 17:00,,,2012-06-10 16:59,2012-07-10 16:59,,2012-06-11 08:00,2012-07-10 17:00,2012-06-11 08:00,2012-07-10 17:00,2012-06-11 08:00,2012-07-10 17:00,,2012-06-10 16:59,2012-07-10 16:59,CS_MSO,PT_Normal,,,,,QxSKdHQv2U69z3q7V5gIRA,XSjOeWLmc0Suy1GGlTLASQ,,,N,0,0,,,2012-06-20 10:14,2012-06-20 10:14,admin,admin,,,
266,83347,772,10417,794,1,0,N,N,N,CP_Drtn,TT_Task,DT_FixedDUR2,RV_OK,TK_NotStart,PRT33,Piping Valves Bulk material 1st batch,,-0.016667,999,112,0,0,0,112,0,0,0,2012-06-23 17:00,,,2012-06-23 16:59,2012-07-07 16:59,,2012-06-24 08:00,2012-07-07 17:00,2012-06-24 08:00,2012-07-07 17:00,2012-06-24 08:00,2012-07-07 17:00,,2012-06-23 16:59,2012-07-07 16:59,CS_MSO,PT_Normal,,,,,K+AMjtubmEaRwafHM/QCPA,mQTrdmlAckeihDmyjty0yw,,,N,0,0,,,2012-06-20 10:14,2012-06-20 10:14,admin,admin,,,
267,83348,772,10417,794,1,0,N,N,N,CP_Drtn,TT_Task,DT_FixedDUR2,RV_OK,TK_NotStart,PRT34,Piping valves Bulk material 2nd batch,,-0.016667,767,112,0,0,0,112,0,0,0,2012-07-22 17:00,,,2012-07-22 16:59,2012-08-05 16:59,,2012-07-23 08:00,2012-08-05 17:00,2012-07-23 08:00,2012-08-05 17:00,2012-07-23 08:00,2012-08-05 17:00,,2012-07-22 16:59,2012-08-05 16:59,CS_MSO,PT_Normal,,,,,1Ox74Vmq7Uy7hA69EKfkcA,XYLgLhVz1EisgV8ctlneGw,,,N,0,0,,,2012-06-20 10:14,2012-06-20 10:14,admin,admin,,,
268,83349,772,10417,794,1,0,N,N,N,CP_Drtn,TT_Task,DT_FixedDUR2,RV_OK,TK_NotStart,PRT35,Flanges,,-0.016667,8,360,0,0,0,360,0,0,0,2012-07-13 17:00,,,2012-07-13 16:59,2012-08-27 16:59,,2012-07-14 08:00,2012-08-27 17:00,2012-07-14 08:00,2012-08-27 17:00,2012-07-14 08:00,2012-08-27 17:00,,2012-07-13 16:59,2012-08-27 16:59,CS_MSO,PT_Normal,,,,,jxAj61IxkEuITXnpaD0P+w,ynw/2kVsJUCQTiDjWuiUKg,,,N,0,0,,,2012-06-20 10:14,2012-06-20 10:14,admin,admin,,,
269,83350,772,10417,794,1,0,N,N,N,CP_Drtn,TT_Task,DT_FixedDUR2,RV_OK,TK_NotStart,PRT36,Pressure Safety Valve,,-0.016667,1519,352,0,0,0,352,0,0,0,2012-06-04 17:00,,,2012-06-04 16:59,2012-07-18 16:59,,2012-06-05 08:00,2012-07-18 17:00,2012-06-05 08:00,2012-07-18 17:00,2012-06-05 08:00,2012-07-18 17:00,,2012-06-04 16:59,2012-07-18 16:59,CS_MSO,PT_Normal,,,,,kUAiGY/tV0qwjgSiVCIIxQ,FmcfYmS0CkqRp6Gvxanm2A,,,N,0,0,,,2012-06-20 10:14,2012-06-20 10:14,admin,admin,,,
270,83351,772,10417,794,1,0,N,N,N,CP_Drtn,TT_Task,DT_FixedDUR2,RV_OK,TK_NotStart,PRT37,Pressure regulator Valve,,-0.016667,1231,240,0,0,0,240,0,0,0,2012-07-24 17:00,,,2012-07-24 16:59,2012-08-23 16:59,,2012-07-25 08:00,2012-08-23 17:00,2012-07-25 08:00,2012-08-23 17:00,2012-07-25 08:00,2012-08-23 17:00,,2012-07-24 16:59,2012-08-23 16:59,CS_MSO,PT_Normal,,,,,Ailk3zU2FkOBYFB7C3ujBw,MUMBakw88UCMBwfosGhvtA,,,N,0,0,,,2012-06-20 10:14,2012-06-20 10:14,admin,admin,,,
271,83352,772,10417,794,1,0,N,N,N,CP_Drtn,TT_Task,DT_FixedDUR2,RV_OK,TK_NotStart,PRT38,Shutdown Valve,,-0.016667,1135,248,0,0,0,248,0,0,0,2012-08-04 17:00,,,2012-08-04 16:59,2012-09-04 16:59,,2012-08-05 08:00,2012-09-04 17:00,2012-08-05 08:00,2012-09-04 17:00,2012-08-05 08:00,2012-09-04 17:00,,2012-08-04 16:59,2012-09-04 16:59,CS_MSO,PT_Normal,,,,,xWOb5yIjc0yYkaGSLGhabw,3HVeZrPw+kua3HhPYoeooQ,,,N,0,0,,,2012-06-20 10:14,2012-06-20 10:14,admin,admin,,,
272,83353,772,10418,794,1,0,N,N,N,CP_Drtn,TT_Task,DT_FixedDUR2,RV_OK,TK_NotStart,PRT39,Chemical Injection PKG.,,-0.016667,1264,360,0,0,0,360,0,0,0,2012-05-08 17:00,,,2012-05-08 16:59,2012-06-22 16:59,,2012-05-09 08:00,2012-06-22 17:00,2012-05-09 08:00,2012-06-22 17:00,2012-05-09 08:00,2012-06-22 17:00,,2012-05-08 16:59,2012-06-22 16:59,CS_MSO,PT_Normal,,,,,9gppGeE0skmr94lpEdAwXw,atgCRGby9EyY4hjcV3KVMw,,,N,0,0,,,2012-06-20 10:14,2012-06-20 10:14,admin,admin,,,
273,83354,772,10418,794,1,0,N,N,N,CP_Drtn,TT_Task,DT_FixedDUR2,RV_OK,TK_NotStart,PRT40,Launcher recivier,,-0.016667,960,360,0,0,0,360,0,0,0,2012-06-15 17:00,,,2012-06-15 16:59,2012-07-30 16:59,,2012-06-16 08:00,2012-07-30 17:00,2012-06-16 08:00,2012-07-30 17:00,2012-06-16 08:00,2012-07-30 17:00,,2012-06-15 16:59,2012-07-30 16:59,CS_MSO,PT_Normal,,,,,nqnd+oxQYUGL35kW/rNMlQ,EKOmDBP6cEq6EOVl5NB3WA,,,N,0,0,,,2012-06-20 10:14,2012-06-20 10:14,admin,admin,,,
274,83355,772,10418,794,1,0,N,N,N,CP_Drtn,TT_Task,DT_FixedDUR2,RV_OK,TK_NotStart,PRT71,Vent KOD,,-0.016667,864,360,0,0,0,360,0,0,0,2012-06-27 17:00,,,2012-06-27 16:59,2012-08-11 16:59,,2012-06-28 08:00,2012-08-11 17:00,2012-06-28 08:00,2012-08-11 17:00,2012-06-28 08:00,2012-08-11 17:00,,2012-06-27 16:59,2012-08-11 16:59,CS_MSO,PT_Normal,,,,,b5veXsXQE0CfCXdcjH2Nag,rf+Er5qWCU2Vl8wE317jGQ,,,N,0,0,,,2012-06-20 10:14,2012-06-20 10:14,admin,admin,,,
275,83356,772,10418,794,1,0,N,N,N,CP_Drtn,TT_Task,DT_FixedDUR2,RV_OK,TK_NotStart,PRT72,Open Drain Tank,,-0.016667,624,360,0,0,0,360,0,0,0,2012-06-27 17:00,,,2012-06-27 16:59,2012-08-11 16:59,,2012-06-28 08:00,2012-08-11 17:00,2012-06-28 08:00,2012-08-11 17:00,2012-06-28 08:00,2012-08-11 17:00,,2012-06-27 16:59,2012-08-11 16:59,CS_MSO,PT_Normal,,,,,lrhCpXimp0G3omZrtJO/1Q,QEatGDsWyEC05CbcxV4PSA,,,N,0,0,,,2012-06-20 10:14,2012-06-20 10:14,admin,admin,,,
276,83357,772,10419,794,1,0,N,N,N,CP_Drtn,TT_Task,DT_FixedDUR2,RV_OK,TK_NotStart,PRS33,Delivery of Structure Material (F.O.B - 13 Wks.) - (Gupco Responsability),,0,0,728,0,0,0,728,0,0,0,,,,2012-02-15 08:00,2012-05-15 17:00,,2012-02-15 08:00,2012-05-15 17:00,2012-02-15 08:00,2012-05-15 17:00,2012-02-15 08:00,2012-05-15 17:00,,2012-02-15 08:00,2012-05-15 17:00,,PT_Normal,,,,,jrFdm42vGkWdzWmytXqFcw,ufROFkTcoEuCgCWoyMhxDg,,,Y,0,0,,,2012-06-20 10:14,2012-06-20 10:14,admin,admin,,,
277,83358,772,10419,794,1,0,N,N,N,CP_Drtn,TT_Task,DT_FixedDUR2,RV_OK,TK_NotStart,PRS35,Material check with IFC DWG's to Prepare balance material,,1566.983333,0,56,0,0,0,56,0,0,0,,,,2012-10-28 16:00,2012-11-04 16:00,,2012-04-16 08:01,2012-04-23 08:01,2012-04-16 08:01,2012-04-23 08:01,2012-04-16 08:01,2012-04-23 08:01,,2012-10-28 16:00,2012-11-04 16:00,,PT_Normal,,,,,mpCDhAPuvUSTpy5egJUgfw,WHf9ahQtqU2p9l32LH4nFg,,,N,0,0,,,2012-06-20 10:14,2012-06-20 10:14,admin,admin,,,
278,83359,772,10419,794,1,0,N,N,N,CP_Drtn,TT_Task,DT_FixedDUR2,RV_OK,TK_NotStart,PRS36,Delivery of balance material,,1566.983333,1566.983333,1232,0,0,0,1232,0,0,0,,,,2012-11-04 16:00,2013-04-07 16:00,,2012-04-23 08:01,2012-09-24 08:01,2012-04-23 08:01,2012-09-24 08:01,2012-04-23 08:01,2012-09-24 08:01,,2012-11-04 16:00,2013-04-07 16:00,,PT_Normal,,,,,Mun3Vp4Wtk2mvKXQs8U1qw,qqmATIO3T0mle0HolK/t5g,,,N,0,0,,,2012-06-20 10:14,2012-06-20 10:14,admin,admin,,,
279,83360,772,10419,794,0,0,N,N,N,CP_Drtn,TT_Mile,DT_FixedDrtn,RV_OK,TK_NotStart,PRS31,Issue Structural Material P.O's ( Gupco Responsability),,0,64,0,0,0,0,0,0,0,0,2012-02-07 08:00,,,2012-02-07 08:00,2012-02-07 08:00,,2012-02-07 08:00,2012-02-07 08:00,2012-02-07 08:00,2012-02-07 08:00,2012-02-07 08:00,2012-02-07 08:00,,2012-02-07 08:00,2012-02-07 08:00,CS_MSO,PT_Normal,,,,,80EgmYeoGE6R9jqTnAphlQ,pHgYmay3DEa6F1CjhdcYlQ,,,N,0,0,,,2012-06-20 10:14,2012-06-20 10:14,admin,admin,,,
280,83361,772,10419,794,0,0,N,N,N,CP_Drtn,TT_Mile,DT_FixedDrtn,RV_OK,TK_NotStart,PRS32,Issue LC ( Gupco Responsability),,0,0,0,0,0,0,0,0,0,0,2012-02-15 08:00,,,2012-02-15 08:00,2012-02-15 08:00,,2012-02-15 08:00,2012-02-15 08:00,2012-02-15 08:00,2012-02-15 08:00,2012-02-15 08:00,2012-02-15 08:00,,2012-02-15 08:00,2012-02-15 08:00,CS_MSO,PT_Normal,,,,,L2aA7i2ZlEGaslV0GJ/YQQ,veFibYaEtEavYsz0ENZ8Xw,,,Y,0,0,,,2012-06-20 10:14,2012-06-20 10:14,admin,admin,,,
281,83362,772,10419,794,1,0,N,N,N,CP_Drtn,TT_Task,DT_FixedDUR2,RV_OK,TK_NotStart,PRS34,Delivery of Structure Material at Site (4 Wks.),,0,0,224,0,0,0,224,0,0,0,,,,2012-05-16 08:00,2012-06-12 17:00,,2012-05-16 08:00,2012-06-12 17:00,2012-05-16 08:00,2012-06-12 17:00,2012-05-16 08:00,2012-06-12 17:00,,2012-05-16 08:00,2012-06-12 17:00,,PT_Normal,,,,,10ja6Pv//UacWFqNEOKhMA,nRJYaZzK+UG2EPxNOD2G8g,,,Y,0,0,,,2012-06-20 10:14,2012-06-20 10:14,admin,admin,,,
282,83363,772,10420,794,1,0,N,N,N,CP_Drtn,TT_Task,DT_FixedDrtn,RV_OK,TK_NotStart,PRP31,"Pipeline 18"""" & Fittings",,0,0,408,0,0,0,408,0,0,0,2012-05-31 08:00,,,2012-05-31 08:00,2012-07-20 17:00,,2012-05-31 08:00,2012-07-20 17:00,2012-05-31 08:00,2012-07-20 17:00,2012-05-31 08:00,2012-07-20 17:00,,2012-05-31 08:00,2012-07-20 17:00,CS_MSO,PT_Normal,,,,,2EBZauWWWkafgkfEI4VlgA,0gQPSnx6fE6L7wIm15puCg,,,N,0,0,,,2012-06-20 10:14,2012-06-20 10:14,admin,admin,,,
283,83364,772,10420,794,1,0,N,N,N,CP_Drtn,TT_Task,DT_FixedDrtn,RV_OK,TK_NotStart,PRP62,"Pipeline 8"""" & Fittings",,-0.016667,351,408,0,0,0,408,0,0,0,2012-05-30 17:00,,,2012-05-30 16:59,2012-07-20 16:59,,2012-05-31 08:00,2012-07-20 17:00,2012-05-31 08:00,2012-07-20 17:00,2012-05-31 08:00,2012-07-20 17:00,,2012-05-30 16:59,2012-07-20 16:59,CS_MSO,PT_Normal,,,,,MG+Q56kb9kyVO21XDJpNRA,AxWyZ9p3n0Oi1nGfbffvUg,,,N,0,0,,,2012-06-20 10:14,2012-06-20 10:14,admin,admin,,,
284,83365,772,10422,794,1,0,N,N,N,CP_Drtn,TT_Task,DT_FixedDUR2,RV_OK,TK_NotStart,PRE37,Radar system,,-0.016667,904,240,0,0,0,240,0,0,0,2012-06-19 17:00,,,2012-06-19 16:59,2012-07-19 16:59,,2012-06-20 08:00,2012-07-19 17:00,2012-06-20 08:00,2012-07-19 17:00,2012-06-20 08:00,2012-07-19 17:00,,2012-06-19 16:59,2012-07-19 16:59,CS_MSO,PT_Normal,,,,,QjJU7Qm13U+y7cXKv6Ropw,ZwOgBmKoj0abTWYrf+cpXQ,,,N,0,0,,,2012-06-20 10:14,2012-06-20 10:14,admin,admin,,,
285,83366,772,10422,794,1,0,N,N,N,CP_Drtn,TT_Task,DT_FixedDUR2,RV_OK,TK_NotStart,PRE38,Navegation Aids,,-0.016667,1384,360,0,0,0,360,0,0,0,2012-04-05 17:00,,,2012-04-05 16:59,2012-05-20 16:59,,2012-04-06 08:00,2012-05-20 17:00,2012-04-06 08:00,2012-05-20 17:00,2012-04-06 08:00,2012-05-20 17:00,,2012-04-05 16:59,2012-05-20 16:59,CS_MSO,PT_Normal,,,,,b1h11t2rbk2Ewu7r992ixg,AdPCWeKs9Eu/XKLAjtX/xg,,,N,0,0,,,2012-06-20 10:14,2012-06-20 10:14,admin,admin,,,
286,83367,772,10423,794,1,0,N,N,N,CP_Drtn,TT_Task,DT_FixedDUR2,RV_OK,TK_NotStart,PRE61,Electrical Bulks,,-0.016667,512,360,0,0,0,360,0,0,0,2012-07-23 17:00,,,2012-07-23 16:59,2012-09-06 16:59,,2012-07-24 08:00,2012-09-06 17:00,2012-07-24 08:00,2012-09-06 17:00,2012-07-24 08:00,2012-09-06 17:00,,2012-07-23 16:59,2012-09-06 16:59,CS_MSO,PT_Normal,,,,,neTb6EQa70WLjoLuFwMKhw,WXLNpk9sVEuqCcpSKWeHsQ,,,N,0,0,,,2012-06-20 10:14,2012-06-20 10:14,admin,admin,,,
287,83368,772,10423,794,1,0,N,N,N,CP_Drtn,TT_Task,DT_FixedDUR2,RV_OK,TK_NotStart,PRE62,Cathodic Protection,,-0.016667,1000,360,0,0,0,360,0,0,0,2012-05-23 17:00,,,2012-05-23 16:59,2012-07-07 16:59,,2012-05-24 08:00,2012-07-07 17:00,2012-05-24 08:00,2012-07-07 17:00,2012-05-24 08:00,2012-07-07 17:00,,2012-05-23 16:59,2012-07-07 16:59,CS_MSO,PT_Normal,,,,,014uzk0urkec7WsIIC8IZA,rBAMXE1Xckm5NRjyKElk1A,,,N,0,0,,,2012-06-20 10:14,2012-06-20 10:14,admin,admin,,,
288,83369,772,10423,794,1,0,N,N,N,CP_Drtn,TT_Task,DT_FixedDUR2,RV_OK,TK_NotStart,PRE63,Solar Power,,-0.016667,912,360,0,0,0,360,0,0,0,2012-06-03 17:00,,,2012-06-03 16:59,2012-07-18 16:59,,2012-06-04 08:00,2012-07-18 17:00,2012-06-04 08:00,2012-07-18 17:00,2012-06-04 08:00,2012-07-18 17:00,,2012-06-03 16:59,2012-07-18 16:59,CS_MSO,PT_Normal,,,,,xWYe7JnXpEOTGOTZ0Pn7qQ,224lD4coJkG9lmldOcMgGw,,,N,0,0,,,2012-06-20 10:14,2012-06-20 10:14,admin,admin,,,
289,83370,772,10424,794,1,0,N,N,N,CP_Drtn,TT_Task,DT_FixedDUR2,RV_OK,TK_NotStart,PRE34,F&G Detector,,-0.016667,648,360,0,0,0,360,0,0,0,2012-07-06 17:00,,,2012-07-06 16:59,2012-08-20 16:59,,2012-07-07 08:00,2012-08-20 17:00,2012-07-07 08:00,2012-08-20 17:00,2012-07-07 08:00,2012-08-20 17:00,,2012-07-06 16:59,2012-08-20 16:59,CS_MSO,PT_Normal,,,,,jSltzHOriEqRb5i2enCyqQ,GNiZoWepJkyQLU1cno9RoA,,,N,0,0,,,2012-06-20 10:14,2012-06-20 10:14,admin,admin,,,
290,83371,772,10424,794,1,0,N,N,N,CP_Drtn,TT_Task,DT_FixedDUR2,RV_OK,TK_NotStart,PRE35,Fire fighting system,,-0.016667,720,360,0,0,0,360,0,0,0,2012-06-27 17:00,,,2012-06-27 16:59,2012-08-11 16:59,,2012-06-28 08:00,2012-08-11 17:00,2012-06-28 08:00,2012-08-11 17:00,2012-06-28 08:00,2012-08-11 17:00,,2012-06-27 16:59,2012-08-11 16:59,CS_MSO,PT_Normal,,,,,ZDceY2pnA0We+PIPgLHP9A,A2Ms5fr0LkmjeEO9wddbSw,,,N,0,0,,,2012-06-20 10:14,2012-06-20 10:14,admin,admin,,,
291,83372,772,10424,794,1,0,N,N,N,CP_Drtn,TT_Task,DT_FixedDUR2,RV_OK,TK_NotStart,PRE36,Life Saving Equipment,,-0.016667,664,360,0,0,0,360,0,0,0,2012-07-04 17:00,,,2012-07-04 16:59,2012-08-18 16:59,,2012-07-05 08:00,2012-08-18 17:00,2012-07-05 08:00,2012-08-18 17:00,2012-07-05 08:00,2012-08-18 17:00,,2012-07-04 16:59,2012-08-18 16:59,CS_MSO,PT_Normal,,,,,XeqRQxjh8UaOLktpjQMVxw,ldIBOpgah0a/lR8E0LDWiA,,,N,0,0,,,2012-06-20 10:14,2012-06-20 10:14,admin,admin,,,
292,83373,772,10425,794,1,0,N,N,N,CP_Drtn,TT_Task,DT_FixedDUR2,RV_OK,TK_NotStart,PRE39,Instrument Electical Bulk,,-0.016667,624,240,0,0,0,240,0,0,0,2012-07-24 17:00,,,2012-07-24 16:59,2012-08-23 16:59,,2012-07-25 08:00,2012-08-23 17:00,2012-07-25 08:00,2012-08-23 17:00,2012-07-25 08:00,2012-08-23 17:00,,2012-07-24 16:59,2012-08-23 16:59,CS_MSO,PT_Normal,,,,,Q4R7OVa/C0e4h+s2kAf4+A,ZOlQpD0j6k2Oje25cdeLIw,,,N,0,0,,,2012-06-20 10:14,2012-06-20 10:14,admin,admin,,,
293,83374,772,10425,794,1,0,N,N,N,CP_Drtn,TT_Task,DT_FixedDUR2,RV_OK,TK_NotStart,PRE40,Instrument Mechanical Bulk,,-0.016667,640,280,0,0,0,280,0,0,0,2012-07-17 17:00,,,2012-07-17 16:59,2012-08-21 16:59,,2012-07-18 08:00,2012-08-21 17:00,2012-07-18 08:00,2012-08-21 17:00,2012-07-18 08:00,2012-08-21 17:00,,2012-07-17 16:59,2012-08-21 16:59,CS_MSO,PT_Normal,,,,,tuPxn3RbqkKqJ3OZmMqSGA,CONbT0M6vUqQSnyT17w0og,,,N,0,0,,,2012-06-20 10:14,2012-06-20 10:14,admin,admin,,,
294,83375,772,10425,794,1,0,N,N,N,CP_Drtn,TT_Task,DT_FixedDUR2,RV_OK,TK_NotStart,PRE71,Field Instrument,,-0.016667,760,360,0,0,0,360,0,0,0,2012-06-22 17:00,,,2012-06-22 16:59,2012-08-06 16:59,,2012-06-23 08:00,2012-08-06 17:00,2012-06-23 08:00,2012-08-06 17:00,2012-06-23 08:00,2012-08-06 17:00,,2012-06-22 16:59,2012-08-06 16:59,CS_MSO,PT_Normal,,,,,XpabSULv2US9MXCMvOrY7A,w5X6gbh04UW3W5Wq+rSQBg,,,N,0,0,,,2012-06-20 10:14,2012-06-20 10:14,admin,admin,,,
295,83376,772,10425,794,1,0,N,N,N,CP_Drtn,TT_Task,DT_FixedDUR2,RV_OK,TK_NotStart,PRE72,multi phase flow meter,,-0.016667,1095,456,0,0,0,456,0,0,0,2012-07-17 17:00,,,2012-07-17 16:59,2012-09-12 16:59,,2012-07-18 08:00,2012-09-12 17:00,2012-07-18 08:00,2012-09-12 17:00,2012-07-18 08:00,2012-09-12 17:00,,2012-07-17 16:59,2012-09-12 16:59,CS_MSO,PT_Normal,,,,,bjj86CIXH0GVIFaoITs6CQ,uuNDwlD4PUKH8xd4UATKSA,,,N,0,0,,,2012-06-20 10:14,2012-06-20 10:14,admin,admin,,,
296,83377,772,10425,794,1,0,N,N,N,CP_Drtn,TT_Task,DT_FixedDUR2,RV_OK,TK_NotStart,PRE73,Safe Guard system,,-0.016667,1063,240,0,0,0,240,0,0,0,2012-08-17 17:00,,,2012-08-17 16:59,2012-09-16 16:59,,2012-08-18 08:00,2012-09-16 17:00,2012-08-18 08:00,2012-09-16 17:00,2012-08-18 08:00,2012-09-16 17:00,,2012-08-17 16:59,2012-09-16 16:59,CS_MSO,PT_Normal,,,,,FQn4JH2bG0uzt3cn2mebyg,itaIeWskBUuoh6CM3axILA,,,N,0,0,,,2012-06-20 10:14,2012-06-20 10:14,admin,admin,,,
297,83378,772,10427,841,1,0,N,N,N,CP_Drtn,TT_Task,DT_FixedDUR2,RV_OK,TK_NotStart,JK31,"Jacket , Boat Landing Fabrication & Painting",,208,0,1400,0,0,0,1400,0,0,0,,,,2012-07-22 08:00,2013-02-24 16:00,,2012-06-21 08:00,2013-01-22 16:00,2012-06-21 08:00,2013-01-22 16:00,2012-06-21 08:00,2013-01-22 16:00,,2012-07-22 08:00,2013-02-24 16:00,,PT_Normal,,,,,07MUHw0GTEGKn+taXpFYBQ,zGKHlJO9h0ufFBInYTxRrA,,,N,0,0,,,2012-06-20 10:14,2012-06-20 10:14,admin,admin,,,
298,83379,772,10427,841,1,0,N,N,N,CP_Drtn,TT_Task,DT_FixedDUR2,RV_OK,TK_NotStart,JK32,Piles Fabrication & Marking,,592,592,1000,0,0,0,1000,0,0,0,,,,2012-11-08 08:00,2013-04-07 16:00,,2012-08-06 08:00,2013-01-08 16:00,2012-08-06 08:00,2013-01-08 16:00,2012-08-06 08:00,2013-01-08 16:00,,2012-11-08 08:00,2013-04-07 16:00,,PT_Normal,,,,,QGpKNclsu02jqKquPzMDOA,8yP1p3vGb0C5fjxlQvUcfw,,,N,0,0,,,2012-06-20 10:14,2012-06-20 10:14,admin,admin,,,
299,83380,772,10429,841,1,0,N,N,N,CP_Drtn,TT_Task,DT_FixedDUR2,RV_OK,TK_NotStart,DS031,Fabrication and Painting of Below Production Deck/Legs,,0,0,840,0,0,0,840,0,0,0,,,,2012-06-13 08:00,2012-10-18 16:00,,2012-06-13 08:00,2012-10-18 16:00,2012-06-13 08:00,2012-10-18 16:00,2012-06-13 08:00,2012-10-18 16:00,,2012-06-13 08:00,2012-10-18 16:00,,PT_Normal,,,,,g7dIZNLjh0GVyyuHmqN3xQ,h/MVry+KeEKwqKSfSZZSbA,,,Y,0,0,,,2012-06-20 10:14,2012-06-20 10:14,admin,admin,,,
300,83381,772,10429,841,1,0,N,N,N,CP_Drtn,TT_Task,DT_FixedDUR2,RV_OK,TK_NotStart,DS032,Fabrication and Painting of Production Deck,,0,0,960,0,0,0,960,0,0,0,,,,2012-06-13 08:00,2012-11-08 16:00,,2012-06-13 08:00,2012-11-08 16:00,2012-06-13 08:00,2012-11-08 16:00,2012-06-13 08:00,2012-11-08 16:00,,2012-06-13 08:00,2012-11-08 16:00,,PT_Normal,,,,,gzMfwsWwgkKulyp0VNJ00A,PtBKaXvQuUSuBlQPpQvcgw,,,Y,0,0,,,2012-06-20 10:14,2012-06-20 10:14,admin,admin,,,
301,83382,772,10429,841,1,0,N,N,N,CP_Drtn,TT_Task,DT_FixedDUR2,RV_OK,TK_NotStart,DS033,Fabrication and Paint of Heli-Deck ( & Lifting if Required),,400,0,960,0,0,0,960,0,0,0,,,,2012-10-29 08:00,2013-03-21 16:00,,2012-08-27 08:00,2013-01-20 16:00,2012-08-27 08:00,2013-01-20 16:00,2012-08-27 08:00,2013-01-20 16:00,,2012-10-29 08:00,2013-03-21 16:00,,PT_Normal,,,,,EKFCUYUJikmny5a/rYECvg,u+lYOixuZEmCroS3jLPeEw,,,N,0,0,,,2012-06-20 10:14,2012-06-20 10:14,admin,admin,,,
302,83383,772,10429,841,1,0,N,N,N,CP_Drtn,TT_Task,DT_FixedDUR2,RV_OK,TK_NotStart,DS034,Lifting Below Production Deck on High Cups,,24,0,40,0,0,0,40,0,0,0,,,,2012-10-23 08:00,2012-10-31 16:00,,2012-10-20 08:00,2012-10-24 16:00,2012-10-20 08:00,2012-10-24 16:00,2012-10-20 08:00,2012-10-24 16:00,,2012-10-23 08:00,2012-10-31 16:00,,PT_Normal,,,,,fR4yKCUoN0OyTIjORW3+FA,7qUpAXG7dk+8p3OnysDIAQ,,,N,0,0,,,2012-06-20 10:14,2012-06-20 10:14,admin,admin,,,
303,83384,772,10429,841,1,0,N,N,N,CP_Drtn,TT_Task,DT_FixedDUR2,RV_OK,TK_NotStart,DS035,Lifting Production Deck on Below Production Level,,0,0,120,0,0,0,120,0,0,0,,,,2012-11-10 08:00,2012-11-27 16:00,,2012-11-10 08:00,2012-11-27 16:00,2012-11-10 08:00,2012-11-27 16:00,2012-11-10 08:00,2012-11-27 16:00,,2012-11-10 08:00,2012-11-27 16:00,,PT_Normal,,,,,ugS17ecIIESl/xXVzboGXg,pvhdQ+zLoUGlsGsHJLF0kg,,,Y,0,0,,,2012-06-20 10:14,2012-06-20 10:14,admin,admin,,,
304,83385,772,10429,841,1,0,N,N,N,CP_Drtn,TT_Task,DT_FixedDUR2,RV_OK,TK_NotStart,DS036,Fabrication & Installation of Deck Str. Miscellence / Padeyes,,80,24,960,0,0,0,960,0,0,0,,,,2012-10-17 08:00,2013-03-13 16:00,,2012-10-04 08:00,2013-03-02 16:00,2012-10-04 08:00,2013-03-02 16:00,2012-10-04 08:00,2013-03-02 16:00,,2012-10-17 08:00,2013-03-13 16:00,,PT_Normal,,,,,N/zNtwltWEqQPUxJ+NUxXw,or5G+IMdSky8NZLBdVW8xQ,,,N,0,0,,,2012-06-20 10:14,2012-06-20 10:14,admin,admin,,,
305,83386,772,10429,841,0,0,N,N,N,CP_Drtn,TT_FinMile,DT_FixedDrtn,RV_OK,TK_NotStart,DS037,Physical Weighting,,80,0,0,0,0,0,0,0,0,0,,,,2013-03-06 16:00,2013-03-06 16:00,,2013-02-23 16:00,2013-02-23 16:00,2013-02-23 16:00,2013-02-23 16:00,2013-02-23 16:00,2013-02-23 16:00,,2013-03-06 16:00,2013-03-06 16:00,,PT_Normal,,,,,pqQ09OWbsUKWmPb3fJbptQ,JGpic5NftEGkYFLxWQfh6Q,,,N,0,0,,,2012-06-20 10:14,2012-06-20 10:14,admin,admin,,,
306,83387,772,10429,841,1,0,N,N,N,CP_Drtn,TT_Task,DT_FixedDUR2,RV_OK,TK_NotStart,DS038,Clearanse of structure (Fab. & Painting ) Punch List,,56,56,168,0,0,0,168,0,0,0,,,,2013-03-14 08:00,2013-04-07 16:00,,2013-03-06 08:00,2013-03-30 16:00,2013-03-06 08:00,2013-03-30 16:00,2013-03-06 08:00,2013-03-30 16:00,,2013-03-14 08:00,2013-04-07 16:00,,PT_Normal,,,,,pvUEhnvnQUuyKK/voipxpw,UIxplIh3eEeSSoKUHZsCug,,,N,0,0,,,2012-06-20 10:14,2012-06-20 10:14,admin,admin,,,
307,83388,772,10431,841,1,0,N,N,N,CP_Drtn,TT_Task,DT_FixedDUR2,RV_OK,TK_NotStart,TFS031,Piping and Piping Supports Fabrication and Painting,,320,320,800,0,0,0,800,0,0,0,,,,2012-09-10 08:00,2013-01-10 16:00,,2012-07-21 08:00,2012-11-24 16:00,2012-07-21 08:00,2012-11-24 16:00,2012-07-21 08:00,2012-11-24 16:00,,2012-09-10 08:00,2013-01-10 16:00,,PT_Normal,,,,,b5BU2ceStkWe5XBqZjZdUQ,Vo+VEHnX1Uib2F6euGIM0g,,,N,0,0,,,2012-06-20 10:14,2012-06-20 10:14,admin,admin,,,
308,83389,772,10431,841,1,0,N,N,N,CP_Drtn,TT_Task,DT_FixedDUR2,RV_OK,TK_NotStart,TSF032,Piping and Piping Supports Erection,,0,0,600,0,0,0,600,0,0,0,,,,2012-11-25 08:00,2013-02-23 16:00,,2012-11-25 08:00,2013-02-23 16:00,2012-11-25 08:00,2013-02-23 16:00,2012-11-25 08:00,2013-02-23 16:00,,2012-11-25 08:00,2013-02-23 16:00,,PT_Normal,,,,,lp4CzX+0r0exsCMBjsQ/Gg,quyCDFL4eUW8pPpR3D60VQ,,,Y,0,0,,,2012-06-20 10:14,2012-06-20 10:14,admin,admin,,,
309,83390,772,10432,841,1,0,N,N,N,CP_Drtn,TT_Task,DT_FixedDUR2,RV_OK,TK_NotStart,TSF033,Equipment Erection on Below Production Level,,24,24,56,0,0,0,56,0,0,0,,,,2012-11-01 08:00,2012-11-08 16:00,,2012-10-29 08:00,2012-11-05 16:00,2012-10-29 08:00,2012-11-05 16:00,2012-10-29 08:00,2012-11-05 16:00,,2012-11-01 08:00,2012-11-08 16:00,,PT_Normal,,,,,LQiCxK3/v0WUQtxj4/eZtw,Qa6Zp0iH/keaZsqvOalZPQ,,,N,0,0,,,2012-06-20 10:14,2012-06-20 10:14,admin,admin,,,
310,83391,772,10432,841,1,0,N,N,N,CP_Drtn,TT_Task,DT_FixedDUR2,RV_OK,TK_NotStart,TSF034,Equipment Erection on Production Level,,216,216,120,0,0,0,120,0,0,0,,,,2012-12-30 08:00,2013-01-16 16:00,,2012-11-28 08:00,2012-12-15 16:00,2012-11-28 08:00,2012-12-15 16:00,2012-11-28 08:00,2012-12-15 16:00,,2012-12-30 08:00,2013-01-16 16:00,,PT_Normal,,,,,f3d6itKKc0eAsKFsmlMw9g,03vCXS0/Y0i+shto1SSNJQ,,,N,0,0,,,2012-06-20 10:14,2012-06-20 10:14,admin,admin,,,
311,83392,772,10432,841,1,0,N,N,N,CP_Drtn,TT_Task,DT_FixedDUR2,RV_OK,TK_NotStart,TSF035,Equipment Erection on Helideck,,400,400,56,0,0,0,56,0,0,0,,,,2013-02-16 08:00,2013-02-23 16:00,,2012-12-16 08:00,2012-12-23 16:00,2012-12-16 08:00,2012-12-23 16:00,2012-12-16 08:00,2012-12-23 16:00,,2013-02-16 08:00,2013-02-23 16:00,,PT_Normal,,,,,aUBY6CFV5USUmrHmKoFEjw,2mIAAJqfL02S54HKn+zoOQ,,,N,0,0,,,2012-06-20 10:14,2012-06-20 10:14,admin,admin,,,
312,83393,772,10433,841,1,0,N,N,N,CP_Drtn,TT_Task,DT_FixedDUR2,RV_OK,TK_NotStart,TS37,E&I Activity,,16,16,720,0,0,0,720,0,0,0,,,,2012-11-12 08:00,2013-02-28 16:00,,2012-11-10 08:00,2013-02-26 16:00,2012-11-10 08:00,2013-02-26 16:00,2012-11-10 08:00,2013-02-26 16:00,,2012-11-12 08:00,2013-02-28 16:00,,PT_Normal,,,,,3clmKyWktEyrxTec5tkuBA,+j8BLsZNOU+OrJICVK5F1w,,,N,0,0,,,2012-06-20 10:14,2012-06-20 10:14,admin,admin,,,
313,83394,772,10434,841,1,0,N,N,N,CP_Drtn,TT_Task,DT_FixedDUR2,RV_OK,TK_NotStart,TS38,"Pre-commissioning """" Piping Hydrotest , Reinstatment , Megering , Continuity Test and Touch Up """"",,0,0,280,0,0,0,280,0,0,0,,,,2013-02-18 08:00,2013-03-30 16:00,,2013-02-18 08:00,2013-03-30 16:00,2013-02-18 08:00,2013-03-30 16:00,2013-02-18 08:00,2013-03-30 16:00,,2013-02-18 08:00,2013-03-30 16:00,,PT_Normal,,,,,k/GoGIy8y0mgAv9yvJAqrg,OTq2jcFatkOlMrI23bWX1Q,,,Y,0,0,,,2012-06-20 10:14,2012-06-20 10:14,admin,admin,,,
314,83395,772,10435,841,1,0,N,N,N,CP_Drtn,TT_Task,DT_FixedDUR2,RV_OK,TK_NotStart,PL31,P/L Spools Fabrication,,832,0,720,0,0,0,720,0,0,0,,,,2012-11-07 08:00,2013-02-24 16:00,,2012-06-30 08:00,2012-10-17 16:00,2012-06-30 08:00,2012-10-17 16:00,2012-06-30 08:00,2012-10-17 16:00,,2012-11-07 08:00,2013-02-24 16:00,,PT_Normal,,,,,KqrPDUlnlkCsiKCMIhtLOw,fNpyI06rOEST5I8j8iDnuA,,,N,0,0,,,2012-06-20 10:14,2012-06-20 10:14,admin,admin,,,
315,83396,772,10437,841,0,0,N,N,N,CP_Drtn,TT_Mile,DT_FixedDrtn,RV_OK,TK_NotStart,LOPS31,Arrival of 01st Shipment Material Barge ( P/L Spools),,0,128,0,0,0,0,0,0,0,0,2012-09-15 08:00,,,2012-09-15 08:00,2012-09-15 08:00,,2012-09-15 08:00,2012-09-15 08:00,2012-09-15 08:00,2012-09-15 08:00,2012-09-15 08:00,2012-09-15 08:00,,2012-09-15 08:00,2012-09-15 08:00,CS_MSO,PT_Normal,,,,,Dyg+a2NAokqFGcF4r9B25Q,xehV9+x7ZE2jS/zzmhzWQA,,,N,0,0,,,2012-06-20 10:14,2012-06-20 10:14,admin,admin,,,
316,83397,772,10437,841,1,0,N,N,N,CP_Drtn,TT_Task,DT_FixedDUR2,RV_OK,TK_NotStart,LOPS32,1st Shipment Material Barge Preparation,,1088,0,96,0,0,0,96,0,0,0,,,,2013-03-20 08:00,2013-04-02 16:00,,2012-10-03 08:00,2012-10-17 16:00,2012-10-03 08:00,2012-10-17 16:00,2012-10-03 08:00,2012-10-17 16:00,,2013-03-20 08:00,2013-04-02 16:00,,PT_Normal,,,,,KoXyzm4kEkadNJDSUREknA,ndqnrpRNm0Kh7Ee9x77pLg,,,N,0,0,,,2012-06-20 10:14,2012-06-20 10:14,admin,admin,,,
317,83398,772,10437,841,1,0,N,N,N,CP_Drtn,TT_Task,DT_FixedDUR2,RV_OK,TK_NotStart,LOPS33,"L/O & Sea Fastening (P/L Spools 18"""" & 8"""")",,1088,0,32,0,0,0,32,0,0,0,,,,2013-04-03 08:00,2013-04-07 16:00,,2012-10-18 08:00,2012-10-22 16:00,2012-10-18 08:00,2012-10-22 16:00,2012-10-18 08:00,2012-10-22 16:00,,2013-04-03 08:00,2013-04-07 16:00,,PT_Normal,,,,,Pc/YYtCKm02U5c994EZd+A,kp9L75XeSkWVYE8hGyBpLQ,,,N,0,0,,,2012-06-20 10:14,2012-06-20 10:14,admin,admin,,,
318,83399,772,10438,841,0,0,N,N,N,CP_Drtn,TT_Mile,DT_FixedDrtn,RV_OK,TK_NotStart,LOJK31,Arrival of 02nd Shipment Material Barge ( Jacket and Piles ),,0,263.983333,0,0,0,0,0,0,0,0,2012-12-01 08:01,,,2012-12-01 08:01,2012-12-01 08:01,,2012-12-01 08:01,2012-12-01 08:01,2012-12-01 08:01,2012-12-01 08:01,2012-12-01 08:01,2012-12-01 08:01,,2012-12-01 08:01,2012-12-01 08:01,CS_MSO,PT_Normal,,,,,twClvn9nfkSAZ2CGd6SI2g,/rdQ3u43Y0aVeyWgwwuYrQ,,,N,0,0,,,2012-06-20 10:14,2012-06-20 10:14,admin,admin,,,
319,83400,772,10438,841,1,0,N,N,N,CP_Drtn,TT_Task,DT_FixedDUR2,RV_OK,TK_NotStart,LOJK32,02nd Shipment Material Barge Preparation,,208,0,96,0,0,0,96,0,0,0,,,,2013-02-11 08:00,2013-02-24 16:00,,2013-01-09 08:00,2013-01-22 16:00,2013-01-09 08:00,2013-01-22 16:00,2013-01-09 08:00,2013-01-22 16:00,,2013-02-11 08:00,2013-02-24 16:00,,PT_Normal,,,,,oOyb74rhgkOJ7CwJQccUrg,S7wGNTJDfUW+8AjycDcj2g,,,N,0,0,,,2012-06-20 10:14,2012-06-20 10:14,admin,admin,,,
320,83401,772,10438,841,1,0,N,N,N,CP_Drtn,TT_Task,DT_FixedDUR2,RV_OK,TK_NotStart,LOJK33,L/O & Sea fastening ( Jacket & Piles ),,208,0,56,0,0,0,56,0,0,0,,,,2013-02-25 08:00,2013-03-04 16:00,,2013-01-23 08:00,2013-01-31 16:00,2013-01-23 08:00,2013-01-31 16:00,2013-01-23 08:00,2013-01-31 16:00,,2013-02-25 08:00,2013-03-04 16:00,,PT_Normal,,,,,CYmaXCva40q7ILqupixf4Q,T2pkffL22UqmUBjuIecM7w,,,N,0,0,,,2012-06-20 10:14,2012-06-20 10:14,admin,admin,,,
321,83402,772,10439,841,0,0,N,N,N,CP_Drtn,TT_Mile,DT_FixedDrtn,RV_OK,TK_NotStart,LODK31,Arrival of 03rd Shipment Material Barge ( Deck C/W TSF ),,-0.016667,104,0,0,0,0,0,0,0,0,2013-03-01 08:01,,,2013-02-28 15:59,2013-02-28 15:59,,2013-03-02 08:00,2013-03-02 08:00,2013-03-02 08:00,2013-03-02 08:00,2013-03-02 08:00,2013-03-02 08:00,,2013-02-28 15:59,2013-02-28 15:59,CS_MSO,PT_Normal,,,,,43qRNQrFQk+Kk0OAmvdiKg,+yVxVOPraUyK1NRhdp+wfA,,,N,0,0,,,2012-06-20 10:14,2012-06-20 10:14,admin,admin,,,
322,83403,772,10439,841,1,0,N,N,N,CP_Drtn,TT_Task,DT_FixedDUR2,RV_OK,TK_NotStart,LODK32,3rd Shipment Material Barge Preparation,,0,0,96,0,0,0,96,0,0,0,,,,2013-03-17 08:00,2013-03-30 16:00,,2013-03-17 08:00,2013-03-30 16:00,2013-03-17 08:00,2013-03-30 16:00,2013-03-17 08:00,2013-03-30 16:00,,2013-03-17 08:00,2013-03-30 16:00,,PT_Normal,,,,,b27pdaUgmEqC59giZ3e4Hw,udpKSE0PREWpEz84cupRDw,,,Y,0,0,,,2012-06-20 10:14,2012-06-20 10:14,admin,admin,,,
323,83404,772,10439,841,1,0,N,N,N,CP_Drtn,TT_Task,DT_FixedDUR2,RV_OK,TK_NotStart,LODK33,L/O & Sea fastening ( Deck),,0,0,56,0,0,0,56,0,0,0,,,,2013-03-31 08:00,2013-04-07 16:00,,2013-03-31 08:00,2013-04-07 16:00,2013-03-31 08:00,2013-04-07 16:00,2013-03-31 08:00,2013-04-07 16:00,,2013-03-31 08:00,2013-04-07 16:00,,PT_Normal,,,,,cdhHzmpY6UWV3f/Jk4hxxw,InSRN6FydkWjBf3988Pjxg,,,Y,0,0,,,2012-06-20 10:14,2012-06-20 10:14,admin,admin,,,
324,83405,772,10420,794,1,0,N,N,N,CP_Drtn,TT_Task,DT_FixedDrtn,RV_OK,TK_NotStart,PRP72,"Pipeline 8"""" & Fittings",,-0.016667,2087,408,0,0,0,408,0,0,0,2012-05-30 17:00,,,2012-05-30 16:59,2012-07-20 16:59,,2012-05-31 08:00,2012-07-20 17:00,2012-05-31 08:00,2012-07-20 17:00,2012-05-31 08:00,2012-07-20 17:00,,2012-05-30 16:59,2012-07-20 16:59,CS_MSO,PT_Normal,,,,,fRFtKjH1Ak2hWAostWkU/w,9oZfFZekBkiGUClhj5HB5A,,,N,0,0,,,2012-06-20 10:14,2012-06-20 10:14,admin,admin,,,
325,83406,772,10429,841,1,0,N,N,N,CP_Drtn,TT_Task,DT_FixedDUR2,RV_OK,TK_NotStart,DS041,Fabrication and Painting of Below Production Deck/Legs,,0,0,840,0,0,0,840,0,0,0,,,,2012-06-13 08:00,2012-10-18 16:00,,2012-06-13 08:00,2012-10-18 16:00,2012-06-13 08:00,2012-10-18 16:00,2012-06-13 08:00,2012-10-18 16:00,,2012-06-13 08:00,2012-10-18 16:00,,PT_Normal,,,,,bviH6ogGCU6lVrsRf/29DA,YDhnGt4WSampcAcCK/B2gQ,,,Y,0,0,,,2012-06-20 10:18,2012-06-20 10:18,admin,admin,,,
326,83407,772,10429,841,1,0,N,N,N,CP_Drtn,TT_Task,DT_FixedDUR2,RV_OK,TK_NotStart,DS042,Fabrication and Painting of Production Deck,,0,0,960,0,0,0,960,0,0,0,,,,2012-06-13 08:00,2012-11-08 16:00,,2012-06-13 08:00,2012-11-08 16:00,2012-06-13 08:00,2012-11-08 16:00,2012-06-13 08:00,2012-11-08 16:00,,2012-06-13 08:00,2012-11-08 16:00,,PT_Normal,,,,,Ik2DEgShlUGalPRI6YSwCA,xFi93CoKSi++4GmIMxpP9w,,,Y,0,0,,,2012-06-20 10:18,2012-06-20 10:18,admin,admin,,,
327,83408,772,10429,841,1,0,N,N,N,CP_Drtn,TT_Task,DT_FixedDUR2,RV_OK,TK_NotStart,DS043,Fabrication and Paint of Heli-Deck ( & Lifting if Required),,400,0,960,0,0,0,960,0,0,0,,,,2012-10-29 08:00,2013-03-21 16:00,,2012-08-27 08:00,2013-01-20 16:00,2012-08-27 08:00,2013-01-20 16:00,2012-08-27 08:00,2013-01-20 16:00,,2012-10-29 08:00,2013-03-21 16:00,,PT_Normal,,,,,Yjtw07lVTUKiE13+VsygqQ,rvAg4dTFTzOC9LQPbMvlVA,,,N,0,0,,,2012-06-20 10:18,2012-06-20 10:18,admin,admin,,,
328,83409,772,10429,841,1,0,N,N,N,CP_Drtn,TT_Task,DT_FixedDUR2,RV_OK,TK_NotStart,DS044,Lifting Below Production Deck on High Cups,,24,0,40,0,0,0,40,0,0,0,,,,2012-10-23 08:00,2012-10-31 16:00,,2012-10-20 08:00,2012-10-24 16:00,2012-10-20 08:00,2012-10-24 16:00,2012-10-20 08:00,2012-10-24 16:00,,2012-10-23 08:00,2012-10-31 16:00,,PT_Normal,,,,,UcMaKMd3BU2M4VZCIjdYRg,bQ+CxC0TQriVcwNqie/vXQ,,,N,0,0,,,2012-06-20 10:18,2012-06-20 10:18,admin,admin,,,
329,83410,772,10429,841,1,0,N,N,N,CP_Drtn,TT_Task,DT_FixedDUR2,RV_OK,TK_NotStart,DS045,Lifting Production Deck on Below Production Level,,0,0,120,0,0,0,120,0,0,0,,,,2012-11-10 08:00,2012-11-27 16:00,,2012-11-10 08:00,2012-11-27 16:00,2012-11-10 08:00,2012-11-27 16:00,2012-11-10 08:00,2012-11-27 16:00,,2012-11-10 08:00,2012-11-27 16:00,,PT_Normal,,,,,hlr0ky3P/0imI6XsAehBzg,kvv6UChdRT2TML26fqP2Og,,,Y,0,0,,,2012-06-20 10:18,2012-06-20 10:18,admin,admin,,,
330,83411,772,10429,841,1,0,N,N,N,CP_Drtn,TT_Task,DT_FixedDUR2,RV_OK,TK_NotStart,DS046,Fabrication & Installation of Deck Str. Miscellence / Padeyes,,80,24,960,0,0,0,960,0,0,0,,,,2012-10-17 08:00,2013-03-13 16:00,,2012-10-04 08:00,2013-03-02 16:00,2012-10-04 08:00,2013-03-02 16:00,2012-10-04 08:00,2013-03-02 16:00,,2012-10-17 08:00,2013-03-13 16:00,,PT_Normal,,,,,vScDlRJFu02f/c6ebz8KCg,CWEx43mfRrCS6ZOEt8Q5OA,,,N,0,0,,,2012-06-20 10:18,2012-06-20 10:18,admin,admin,,,
331,83412,772,10429,841,0,0,N,N,N,CP_Drtn,TT_FinMile,DT_FixedDrtn,RV_OK,TK_NotStart,DS047,Physical Weighting,,80,0,0,0,0,0,0,0,0,0,,,,2013-03-06 16:00,2013-03-06 16:00,,2013-02-23 16:00,2013-02-23 16:00,2013-02-23 16:00,2013-02-23 16:00,2013-02-23 16:00,2013-02-23 16:00,,2013-03-06 16:00,2013-03-06 16:00,,PT_Normal,,,,,UTMtTp53dEWNjZCc99Sqng,dU19c7ngSBGK2PpNjJWMWA,,,N,0,0,,,2012-06-20 10:18,2012-06-20 10:18,admin,admin,,,
332,83449,772,10432,841,1,0,N,N,N,CP_Drtn,TT_Task,DT_FixedDUR2,RV_OK,TK_NotStart,TSF043,Equipment Erection on Below Production Level,,24,24,56,0,0,0,56,0,0,0,,,,2012-11-01 08:00,2012-11-08 16:00,,2012-10-29 08:00,2012-11-05 16:00,2012-10-29 08:00,2012-11-05 16:00,2012-10-29 08:00,2012-11-05 16:00,,2012-11-01 08:00,2012-11-08 16:00,,PT_Normal,,,,,cLMXji6lNESnRwzlzIMwjg,LQiCxK3/v0WUQtxj4/eZtw,,,N,0,0,,,2012-06-20 10:30,2012-06-20 10:30,admin,admin,,,
333,83450,772,10432,841,1,0,N,N,N,CP_Drtn,TT_Task,DT_FixedDUR2,RV_OK,TK_NotStart,TSF044,Equipment Erection on Production Level,,216,216,120,0,0,0,120,0,0,0,,,,2012-12-30 08:00,2013-01-16 16:00,,2012-11-28 08:00,2012-12-15 16:00,2012-11-28 08:00,2012-12-15 16:00,2012-11-28 08:00,2012-12-15 16:00,,2012-12-30 08:00,2013-01-16 16:00,,PT_Normal,,,,,w3/hfXGxmk63o9PfOvCzWA,f3d6itKKc0eAsKFsmlMw9g,,,N,0,0,,,2012-06-20 10:30,2012-06-20 10:30,admin,admin,,,
334,83451,772,10432,841,1,0,N,N,N,CP_Drtn,TT_Task,DT_FixedDUR2,RV_OK,TK_NotStart,TSF045,Equipment Erection on Helideck,,400,400,56,0,0,0,56,0,0,0,,,,2013-02-16 08:00,2013-02-23 16:00,,2012-12-16 08:00,2012-12-23 16:00,2012-12-16 08:00,2012-12-23 16:00,2012-12-16 08:00,2012-12-23 16:00,,2013-02-16 08:00,2013-02-23 16:00,,PT_Normal,,,,,OKCIwC+vsUCZDtKPYi3vHg,aUBY6CFV5USUmrHmKoFEjw,,,N,0,0,,,2012-06-20 10:30,2012-06-20 10:30,admin,admin,,,
335,83452,772,10530,841,0,0,N,N,N,CP_Drtn,TT_FinMile,DT_FixedDrtn,RV_OK,TK_NotStart,GM41,Reciving Fax of Award,,-0.016667,0,0,0,0,0,0,0,0,0,2012-01-20 16:00,,,2012-01-19 16:00,2012-01-19 16:00,,2012-01-21 08:01,2012-01-21 08:01,2012-01-21 08:01,2012-01-21 08:01,2012-01-21 08:01,2012-01-21 08:01,,2012-01-19 16:00,2012-01-19 16:00,CS_MEO,PT_Normal,,,,,NX/cEwNnvEavba/g5BJqUw,,,,N,0,0,,,2012-06-20 11:04,2012-06-20 11:04,admin,admin,,,
336,83453,772,10530,841,0,0,N,N,N,CP_Drtn,TT_Mile,DT_FixedDrtn,RV_OK,TK_NotStart,GM42,Project Fab. Start,,1951.983333,1952,0,0,0,0,0,0,0,0,,,,2013-04-07 15:59,2013-04-07 15:59,,2012-06-13 08:00,2012-06-13 08:00,2012-06-13 08:00,2012-06-13 08:00,2012-06-13 08:00,2012-06-13 08:00,,2013-04-07 15:59,2013-04-07 15:59,,PT_Normal,,,,,nY8noZixlEGLgJJzyjxhfQ,,,,N,0,0,,,2012-06-20 11:04,2012-06-20 11:04,admin,admin,,,
337,83454,772,10530,841,0,0,N,N,N,CP_Drtn,TT_Mile,DT_FixedDrtn,RV_OK,TK_NotStart,GM44,Ready for Load out ( 02nd Shipment/ Jacket & Piles ),,208,208,0,0,0,0,0,0,0,0,,,,2013-02-25 08:00,2013-02-25 08:00,,2013-01-23 08:00,2013-01-23 08:00,2013-01-23 08:00,2013-01-23 08:00,2013-01-23 08:00,2013-01-23 08:00,,2013-02-25 08:00,2013-02-25 08:00,,PT_Normal,,,,,38U6kwnFIkyeWGUXeAiNmQ,,,,N,0,0,,,2012-06-20 11:04,2012-06-20 11:04,admin,admin,,,
338,83455,772,10530,841,0,0,N,N,N,CP_Drtn,TT_Mile,DT_FixedDrtn,RV_OK,TK_NotStart,GM45,Ready for Load out ( 03rd Shipment/ Deck C/W TSF ),,55.983333,56,0,0,0,0,0,0,0,0,,,,2013-04-07 15:59,2013-04-07 15:59,,2013-03-31 08:00,2013-03-31 08:00,2013-03-31 08:00,2013-03-31 08:00,2013-03-31 08:00,2013-03-31 08:00,,2013-04-07 15:59,2013-04-07 15:59,,PT_Normal,,,,,riB6c3GIb0yGU3MZcbRwMg,,,,N,0,0,,,2012-06-20 11:04,2012-06-20 11:04,admin,admin,,,
339,83456,772,10530,841,0,0,N,N,N,CP_Drtn,TT_Mile,DT_FixedDrtn,RV_OK,TK_NotStart,GM43,"Ready for Load out (01st Shipment / Pipeline Spools 18"""" & 8"""")",,1119.983333,1120,0,0,0,0,0,0,0,0,,,,2013-04-07 15:59,2013-04-07 15:59,,2012-10-18 08:00,2012-10-18 08:00,2012-10-18 08:00,2012-10-18 08:00,2012-10-18 08:00,2012-10-18 08:00,,2013-04-07 15:59,2013-04-07 15:59,,PT_Normal,,,,,hgDxKOo+X0mgtdTNUhXbVw,,,,N,0,0,,,2012-06-20 11:04,2012-06-20 11:04,admin,admin,,,
340,83457,772,10536,794,1,0,N,N,N,CP_Drtn,TT_Task,DT_FixedDrtn,RV_OK,TK_NotStart,ENS43,Receiving Jacket Primary & Secondary Steel IFC DWG`s,,0,0,1104,0,0,0,1104,0,0,0,2011-11-30 08:01,,,2011-11-30 08:01,2012-04-16 08:01,,2011-11-30 08:01,2012-04-16 08:01,2011-11-30 08:01,2012-04-16 08:01,2011-11-30 08:01,2012-04-16 08:01,,2011-11-30 08:01,2012-04-16 08:01,CS_MSO,PT_Normal,,,,,Gmkd1XWai0Kak4La1CXmow,,,,N,0,0,,,2012-06-20 11:04,2012-06-20 11:04,admin,admin,,,
341,83458,772,10536,794,0,0,N,N,N,CP_Drtn,TT_FinMile,DT_FixedDrtn,RV_OK,TK_NotStart,ENS44,Receiving Piles IFC DWG`s,,0,720,0,0,0,0,0,0,0,0,2012-01-17 08:01,,,2012-01-17 08:01,2012-01-17 08:01,,2012-01-17 08:01,2012-01-17 08:01,2012-01-17 08:01,2012-01-17 08:01,2012-01-17 08:01,2012-01-17 08:01,,2012-01-17 08:01,2012-01-17 08:01,CS_MEO,PT_Normal,,,,,sGcDA3Y0EUmFTRvYL6SsLA,,,,N,0,0,,,2012-06-20 11:04,2012-06-20 11:04,admin,admin,,,
342,83459,772,10536,794,1,0,N,N,N,CP_Drtn,TT_Task,DT_FixedDUR2,RV_OK,TK_NotStart,ENS45,Receiving Deck Str. Primary & Secondary IFC DWG`s,,0,224,328,0,0,0,328,0,0,0,2012-02-07 08:01,,,2012-02-07 08:01,2012-03-19 08:01,,2012-02-07 08:01,2012-03-19 08:01,2012-02-07 08:01,2012-03-19 08:01,2012-02-07 08:01,2012-03-19 08:01,,2012-02-07 08:01,2012-03-19 08:01,CS_MSO,PT_Normal,,,,,a1+PcI9piUm34/7mlCHgzQ,,,,N,0,0,,,2012-06-20 11:04,2012-06-20 11:04,admin,admin,,,
343,83460,772,10536,794,0,0,N,N,N,CP_Drtn,TT_FinMile,DT_FixedDrtn,RV_OK,TK_NotStart,ENS41,"Receiving Final Jacket , Boat Land & Piles MTO",,135.983333,135.983333,0,0,0,0,0,0,0,0,,,,2012-02-14 17:00,2012-02-14 17:00,,2012-01-29 08:01,2012-01-29 08:01,2012-01-29 08:01,2012-01-29 08:01,2012-01-29 08:01,2012-01-29 08:01,,2012-02-14 17:00,2012-02-14 17:00,,PT_Normal,,,,,cdJioCZNBEyEKBfykIwnWw,,,,N,0,0,,,2012-06-20 11:04,2012-06-20 11:04,admin,admin,,,
344,83461,772,10536,794,0,0,N,N,N,CP_Drtn,TT_FinMile,DT_FixedDrtn,RV_OK,TK_NotStart,ENS42,Receiving Final Deck Str. MTO,,135.983333,135.983333,0,0,0,0,0,0,0,0,,,,2012-02-14 17:00,2012-02-14 17:00,,2012-01-29 08:01,2012-01-29 08:01,2012-01-29 08:01,2012-01-29 08:01,2012-01-29 08:01,2012-01-29 08:01,,2012-02-14 17:00,2012-02-14 17:00,,PT_Normal,,,,,y8w/RdlqikSzaHrRUYjAqA,,,,N,0,0,,,2012-06-20 11:04,2012-06-20 11:04,admin,admin,,,
345,83462,772,10536,794,1,0,N,N,N,CP_Drtn,TT_Task,DT_FixedDrtn,RV_OK,TK_NotStart,ENS48,Receiving IFC Equipment fixation DWG`s,,0,1559.983333,104,0,0,0,104,0,0,0,2012-04-04 08:01,,,2012-04-04 08:01,2012-04-17 08:01,,2012-04-04 08:01,2012-04-17 08:01,2012-04-04 08:01,2012-04-17 08:01,2012-04-04 08:01,2012-04-17 08:01,,2012-04-04 08:01,2012-04-17 08:01,CS_MSO,PT_Normal,,,,,PQMPJsvArUSr9KG+EjbMFQ,,,,N,0,0,,,2012-06-20 11:04,2012-06-20 11:04,admin,admin,,,
346,83463,772,10536,794,1,0,N,N,N,CP_Drtn,TT_Task,DT_FixedDUR2,RV_OK,TK_NotStart,ENS46,Receiving Piping Supports IFC DWG's,,0,3078.983333,160,0,0,0,160,0,0,0,2012-02-28 08:01,,,2012-02-28 08:01,2012-03-19 08:01,,2012-02-28 08:01,2012-03-19 08:01,2012-02-28 08:01,2012-03-19 08:01,2012-02-28 08:01,2012-03-19 08:01,,2012-02-28 08:01,2012-03-19 08:01,CS_MSO,PT_Normal,,,,,gK8/xYc9LE+2Mwq6Glfosw,,,,N,0,0,,,2012-06-20 11:04,2012-06-20 11:04,admin,admin,,,
347,83464,772,10536,794,1,0,N,N,N,CP_Drtn,TT_Task,DT_FixedDUR2,RV_OK,TK_NotStart,ENS47,Receiving Cable tarys Support IFC DWG's,,0,3022.983333,104,0,0,0,104,0,0,0,2012-03-13 08:01,,,2012-03-13 08:01,2012-03-26 08:01,,2012-03-13 08:01,2012-03-26 08:01,2012-03-13 08:01,2012-03-26 08:01,2012-03-13 08:01,2012-03-26 08:01,,2012-03-13 08:01,2012-03-26 08:01,CS_MSO,PT_Normal,,,,,Xres6d/X3kOfiHlP8804zw,,,,N,0,0,,,2012-06-20 11:04,2012-06-20 11:04,admin,admin,,,
348,83465,772,10536,794,1,0,N,N,N,CP_Drtn,TT_Task,DT_FixedDrtn,RV_OK,TK_NotStart,ENS49,"Receiving P/L 8"""" & 18"""" IFC DWG's",,0,2736,160,0,0,0,160,0,0,0,2012-04-10 16:00,,,2012-04-10 16:00,2012-04-30 16:00,,2012-04-10 16:00,2012-04-30 16:00,2012-04-10 16:00,2012-04-30 16:00,2012-04-10 16:00,2012-04-30 16:00,,2012-04-10 16:00,2012-04-30 16:00,CS_MSO,PT_Normal,,,,,tB9Av6Fqt06K1ai02yEI+w,,,,N,0,0,,,2012-06-20 11:04,2012-06-20 11:04,admin,admin,,,
349,83466,772,10537,794,1,0,N,N,N,CP_Drtn,TT_Task,DT_FixedDrtn,RV_OK,TK_NotStart,ENT43,Receiving Piping ISO`s IFC DWG's,,0,1047.983333,112,0,0,0,112,0,0,0,2012-02-27 08:01,,,2012-02-27 08:01,2012-03-12 08:01,,2012-02-27 08:01,2012-03-12 08:01,2012-02-27 08:01,2012-03-12 08:01,2012-02-27 08:01,2012-03-12 08:01,,2012-02-27 08:01,2012-03-12 08:01,CS_MSO,PT_Normal,,,,,YF4qiUIb00y6Lkctbej0bg,,,,N,0,0,,,2012-06-20 11:04,2012-06-20 11:04,admin,admin,,,
350,83467,772,10537,794,0,0,N,N,N,CP_Drtn,TT_FinMile,DT_FixedDrtn,RV_OK,TK_NotStart,ENT41,Issue Approved P&ID's / Equipment List IFC DWG's,,0,3584,0,0,0,0,0,0,0,0,2012-01-15 16:00,,,2012-01-15 16:00,2012-01-15 16:00,,2012-01-15 16:00,2012-01-15 16:00,2012-01-15 16:00,2012-01-15 16:00,2012-01-15 16:00,2012-01-15 16:00,,2012-01-15 16:00,2012-01-15 16:00,CS_MEO,PT_Normal,,,,,hEeZlv8FqEmh6poPR85jUQ,,,,N,0,0,,,2012-06-20 11:04,2012-06-20 11:04,admin,admin,,,
351,83468,772,10537,794,0,0,N,N,N,CP_Drtn,TT_FinMile,DT_FixedDrtn,RV_OK,TK_NotStart,ENT42,Issue plat plans IFC DWG's,,0,3408,0,0,0,0,0,0,0,0,2012-02-06 16:00,,,2012-02-06 16:00,2012-02-06 16:00,,2012-02-06 16:00,2012-02-06 16:00,2012-02-06 16:00,2012-02-06 16:00,2012-02-06 16:00,2012-02-06 16:00,,2012-02-06 16:00,2012-02-06 16:00,CS_MEO,PT_Normal,,,,,NUXL8nPd/0iG7egW4SVQJw,,,,N,0,0,,,2012-06-20 11:04,2012-06-20 11:04,admin,admin,,,
352,83469,772,10537,841,0,0,N,N,N,CP_Drtn,TT_FinMile,DT_FixedDrtn,RV_OK,TK_NotStart,ENT44,Issue Hydrotest maps & loops IFC DWG's,,0,2648,0,0,0,0,0,0,0,0,2012-02-28 16:00,,,2012-02-28 16:00,2012-02-28 16:00,,2012-02-28 16:00,2012-02-28 16:00,2012-02-28 16:00,2012-02-28 16:00,2012-02-28 16:00,2012-02-28 16:00,,2012-02-28 16:00,2012-02-28 16:00,CS_MEO,PT_Normal,,,,,6yHFbyqVU06AdqCRXn4mGQ,,,,N,0,0,,,2012-06-20 11:04,2012-06-20 11:04,admin,admin,,,
353,83470,772,10538,794,1,0,N,N,N,CP_Drtn,TT_Task,DT_FixedDUR2,RV_OK,TK_NotStart,ENE41,Receiving E&I IFC DWG`s,,0,2279.983333,776,0,0,0,776,0,0,0,2012-01-23 08:01,,,2012-01-23 08:01,2012-04-29 08:01,,2012-01-23 08:01,2012-04-29 08:01,2012-01-23 08:01,2012-04-29 08:01,2012-01-23 08:01,2012-04-29 08:01,,2012-01-23 08:01,2012-04-29 08:01,CS_MSO,PT_Normal,,,,,gCl8jrhZE0C6joIILUdYRA,,,,N,0,0,,,2012-06-20 11:04,2012-06-20 11:04,admin,admin,,,
354,83471,772,10532,841,1,0,N,N,N,CP_Drtn,TT_Task,DT_FixedDUR2,RV_OK,TK_NotStart,PF41,Pre-Fabrication of Steel Structure ( Jacket & Piles),,208,0,960,0,0,0,960,0,0,0,,,,2012-07-14 08:00,2012-12-10 16:00,,2012-06-13 08:00,2012-11-08 16:00,2012-06-13 08:00,2012-11-08 16:00,2012-06-13 08:00,2012-11-08 16:00,,2012-07-14 08:00,2012-12-10 16:00,,PT_Normal,,,,,s9YzhQq8vkyw3yS7QD3n+w,,,,N,0,0,,,2012-06-20 11:04,2012-06-20 11:04,admin,admin,,,
355,83472,772,10539,794,1,0,N,N,N,CP_Drtn,TT_Task,DT_FixedDUR2,RV_OK,TK_NotStart,PRT81,Piping Bulk material 1st batch,,-0.016667,536,240,0,0,0,240,0,0,0,2012-05-07 17:00,,,2012-05-07 16:59,2012-06-06 16:59,,2012-05-08 08:00,2012-06-06 17:00,2012-05-08 08:00,2012-06-06 17:00,2012-05-08 08:00,2012-06-06 17:00,,2012-05-07 16:59,2012-06-06 16:59,CS_MSO,PT_Normal,,,,,3iwLyP4je0SwKsniBWUkPA,yl9WvSBhsUKXjamnJ9tBwA,,,N,0,0,,,2012-06-20 11:04,2012-06-20 11:04,admin,admin,,,
356,83473,772,10539,794,1,0,N,N,N,CP_Drtn,TT_Task,DT_FixedDUR2,RV_OK,TK_NotStart,PRT82,Piping Bulk material 2nd batch,,-0.016667,855,240,0,0,0,240,0,0,0,2012-06-10 17:00,,,2012-06-10 16:59,2012-07-10 16:59,,2012-06-11 08:00,2012-07-10 17:00,2012-06-11 08:00,2012-07-10 17:00,2012-06-11 08:00,2012-07-10 17:00,,2012-06-10 16:59,2012-07-10 16:59,CS_MSO,PT_Normal,,,,,jiWKNkOJNU6MaHJ4eODjGQ,hlpmj5RDM0ug86CkeyGt7w,,,N,0,0,,,2012-06-20 11:04,2012-06-20 11:04,admin,admin,,,
357,83474,772,10539,794,1,0,N,N,N,CP_Drtn,TT_Task,DT_FixedDUR2,RV_OK,TK_NotStart,PRT43,Piping Valves Bulk material 1st batch,,-0.016667,999,112,0,0,0,112,0,0,0,2012-06-23 17:00,,,2012-06-23 16:59,2012-07-07 16:59,,2012-06-24 08:00,2012-07-07 17:00,2012-06-24 08:00,2012-07-07 17:00,2012-06-24 08:00,2012-07-07 17:00,,2012-06-23 16:59,2012-07-07 16:59,CS_MSO,PT_Normal,,,,,d46ZgQ4NJU+q/C4DPDkNcg,GizpIK9AB0igoR6gZc1u/Q,,,N,0,0,,,2012-06-20 11:04,2012-06-20 11:04,admin,admin,,,
358,83475,772,10539,794,1,0,N,N,N,CP_Drtn,TT_Task,DT_FixedDUR2,RV_OK,TK_NotStart,PRT44,Piping valves Bulk material 2nd batch,,-0.016667,767,112,0,0,0,112,0,0,0,2012-07-22 17:00,,,2012-07-22 16:59,2012-08-05 16:59,,2012-07-23 08:00,2012-08-05 17:00,2012-07-23 08:00,2012-08-05 17:00,2012-07-23 08:00,2012-08-05 17:00,,2012-07-22 16:59,2012-08-05 16:59,CS_MSO,PT_Normal,,,,,df8bGh3feEKjhPTgMyehpA,UK1YuP2nDUesL7urCII2Dw,,,N,0,0,,,2012-06-20 11:04,2012-06-20 11:04,admin,admin,,,
359,83476,772,10539,794,1,0,N,N,N,CP_Drtn,TT_Task,DT_FixedDUR2,RV_OK,TK_NotStart,PRT45,Flanges,,-0.016667,8,360,0,0,0,360,0,0,0,2012-07-13 17:00,,,2012-07-13 16:59,2012-08-27 16:59,,2012-07-14 08:00,2012-08-27 17:00,2012-07-14 08:00,2012-08-27 17:00,2012-07-14 08:00,2012-08-27 17:00,,2012-07-13 16:59,2012-08-27 16:59,CS_MSO,PT_Normal,,,,,s6mPHiz1okCtSw71yfD+Ww,Ex31o9Pan0OuXqbrZEGEag,,,N,0,0,,,2012-06-20 11:04,2012-06-20 11:04,admin,admin,,,
360,83477,772,10539,794,1,0,N,N,N,CP_Drtn,TT_Task,DT_FixedDUR2,RV_OK,TK_NotStart,PRT46,Pressure Safety Valve,,-0.016667,1519,352,0,0,0,352,0,0,0,2012-06-04 17:00,,,2012-06-04 16:59,2012-07-18 16:59,,2012-06-05 08:00,2012-07-18 17:00,2012-06-05 08:00,2012-07-18 17:00,2012-06-05 08:00,2012-07-18 17:00,,2012-06-04 16:59,2012-07-18 16:59,CS_MSO,PT_Normal,,,,,QeDD7dhW/0S63FqJG1cvAA,F7qZYQ2pcEuIGt99a45cYg,,,N,0,0,,,2012-06-20 11:04,2012-06-20 11:04,admin,admin,,,
361,83478,772,10539,794,1,0,N,N,N,CP_Drtn,TT_Task,DT_FixedDUR2,RV_OK,TK_NotStart,PRT47,Pressure regulator Valve,,-0.016667,1231,240,0,0,0,240,0,0,0,2012-07-24 17:00,,,2012-07-24 16:59,2012-08-23 16:59,,2012-07-25 08:00,2012-08-23 17:00,2012-07-25 08:00,2012-08-23 17:00,2012-07-25 08:00,2012-08-23 17:00,,2012-07-24 16:59,2012-08-23 16:59,CS_MSO,PT_Normal,,,,,N4OA8Rfle0C8m6Pzstc/Rw,j+Gn0C3OAUWl0C1SspHgPw,,,N,0,0,,,2012-06-20 11:04,2012-06-20 11:04,admin,admin,,,
362,83479,772,10539,794,1,0,N,N,N,CP_Drtn,TT_Task,DT_FixedDUR2,RV_OK,TK_NotStart,PRT48,Shutdown Valve,,-0.016667,1135,248,0,0,0,248,0,0,0,2012-08-04 17:00,,,2012-08-04 16:59,2012-09-04 16:59,,2012-08-05 08:00,2012-09-04 17:00,2012-08-05 08:00,2012-09-04 17:00,2012-08-05 08:00,2012-09-04 17:00,,2012-08-04 16:59,2012-09-04 16:59,CS_MSO,PT_Normal,,,,,6ybPnLBfC0GnS3/4qUj9xg,teAPEnX+OEanjGoc9mUlTg,,,N,0,0,,,2012-06-20 11:04,2012-06-20 11:04,admin,admin,,,
363,83480,772,10540,794,1,0,N,N,N,CP_Drtn,TT_Task,DT_FixedDUR2,RV_OK,TK_NotStart,PRT49,Chemical Injection PKG.,,-0.016667,1264,360,0,0,0,360,0,0,0,2012-05-08 17:00,,,2012-05-08 16:59,2012-06-22 16:59,,2012-05-09 08:00,2012-06-22 17:00,2012-05-09 08:00,2012-06-22 17:00,2012-05-09 08:00,2012-06-22 17:00,,2012-05-08 16:59,2012-06-22 16:59,CS_MSO,PT_Normal,,,,,7YpT1DFIOkKw5K54z3nhnw,yl9WvSBhsUKXjamnJ9tBwA,,,N,0,0,,,2012-06-20 11:04,2012-06-20 11:04,admin,admin,,,
364,83481,772,10540,794,1,0,N,N,N,CP_Drtn,TT_Task,DT_FixedDUR2,RV_OK,TK_NotStart,PRT50,Launcher recivier,,-0.016667,960,360,0,0,0,360,0,0,0,2012-06-15 17:00,,,2012-06-15 16:59,2012-07-30 16:59,,2012-06-16 08:00,2012-07-30 17:00,2012-06-16 08:00,2012-07-30 17:00,2012-06-16 08:00,2012-07-30 17:00,,2012-06-15 16:59,2012-07-30 16:59,CS_MSO,PT_Normal,,,,,ftoCTEMDCkWm2KJTmeiATA,hlpmj5RDM0ug86CkeyGt7w,,,N,0,0,,,2012-06-20 11:04,2012-06-20 11:04,admin,admin,,,
365,83482,772,10540,794,1,0,N,N,N,CP_Drtn,TT_Task,DT_FixedDUR2,RV_OK,TK_NotStart,PRT91,Vent KOD,,-0.016667,864,360,0,0,0,360,0,0,0,2012-06-27 17:00,,,2012-06-27 16:59,2012-08-11 16:59,,2012-06-28 08:00,2012-08-11 17:00,2012-06-28 08:00,2012-08-11 17:00,2012-06-28 08:00,2012-08-11 17:00,,2012-06-27 16:59,2012-08-11 16:59,CS_MSO,PT_Normal,,,,,tq1CDZDaK0CqYbJYbLi6lQ,GizpIK9AB0igoR6gZc1u/Q,,,N,0,0,,,2012-06-20 11:04,2012-06-20 11:04,admin,admin,,,
366,83483,772,10540,794,1,0,N,N,N,CP_Drtn,TT_Task,DT_FixedDUR2,RV_OK,TK_NotStart,PRT92,Open Drain Tank,,-0.016667,624,360,0,0,0,360,0,0,0,2012-06-27 17:00,,,2012-06-27 16:59,2012-08-11 16:59,,2012-06-28 08:00,2012-08-11 17:00,2012-06-28 08:00,2012-08-11 17:00,2012-06-28 08:00,2012-08-11 17:00,,2012-06-27 16:59,2012-08-11 16:59,CS_MSO,PT_Normal,,,,,hnrRUsLVukyxFkPysQtibw,UK1YuP2nDUesL7urCII2Dw,,,N,0,0,,,2012-06-20 11:04,2012-06-20 11:04,admin,admin,,,
367,83484,772,10541,794,1,0,N,N,N,CP_Drtn,TT_Task,DT_FixedDUR2,RV_OK,TK_NotStart,PRS43,Delivery of Structure Material (F.O.B - 13 Wks.) - (Gupco Responsability),,0,0,728,0,0,0,728,0,0,0,,,,2012-02-15 08:00,2012-05-15 17:00,,2012-02-15 08:00,2012-05-15 17:00,2012-02-15 08:00,2012-05-15 17:00,2012-02-15 08:00,2012-05-15 17:00,,2012-02-15 08:00,2012-05-15 17:00,,PT_Normal,,,,,9ljCDz0F+ES+NnvWPK7C4Q,698/E0SRuUS4pAlggO6l9g,,,Y,0,0,,,2012-06-20 11:04,2012-06-20 11:04,admin,admin,,,
368,83485,772,10541,794,1,0,N,N,N,CP_Drtn,TT_Task,DT_FixedDUR2,RV_OK,TK_NotStart,PRS45,Material check with IFC DWG's to Prepare balance material,,1566.983333,0,56,0,0,0,56,0,0,0,,,,2012-10-28 16:00,2012-11-04 16:00,,2012-04-16 08:01,2012-04-23 08:01,2012-04-16 08:01,2012-04-23 08:01,2012-04-16 08:01,2012-04-23 08:01,,2012-10-28 16:00,2012-11-04 16:00,,PT_Normal,,,,,Ms4X5I2530Km7yG2exnAhw,,,,N,0,0,,,2012-06-20 11:04,2012-06-20 11:04,admin,admin,,,
369,83486,772,10541,794,1,0,N,N,N,CP_Drtn,TT_Task,DT_FixedDUR2,RV_OK,TK_NotStart,PRS46,Delivery of balance material,,1566.983333,1566.983333,1232,0,0,0,1232,0,0,0,,,,2012-11-04 16:00,2013-04-07 16:00,,2012-04-23 08:01,2012-09-24 08:01,2012-04-23 08:01,2012-09-24 08:01,2012-04-23 08:01,2012-09-24 08:01,,2012-11-04 16:00,2013-04-07 16:00,,PT_Normal,,,,,KWwnKtDPcE+LcFpwp1q0Bg,,,,N,0,0,,,2012-06-20 11:04,2012-06-20 11:04,admin,admin,,,
370,83487,772,10541,794,0,0,N,N,N,CP_Drtn,TT_Mile,DT_FixedDrtn,RV_OK,TK_NotStart,PRS41,Issue Structural Material P.O's ( Gupco Responsability),,0,64,0,0,0,0,0,0,0,0,2012-02-07 08:00,,,2012-02-07 08:00,2012-02-07 08:00,,2012-02-07 08:00,2012-02-07 08:00,2012-02-07 08:00,2012-02-07 08:00,2012-02-07 08:00,2012-02-07 08:00,,2012-02-07 08:00,2012-02-07 08:00,CS_MSO,PT_Normal,,,,,vNr3k1RmekSPDYrErJ08sw,,,,N,0,0,,,2012-06-20 11:04,2012-06-20 11:04,admin,admin,,,
371,83488,772,10541,794,0,0,N,N,N,CP_Drtn,TT_Mile,DT_FixedDrtn,RV_OK,TK_NotStart,PRS42,Issue LC ( Gupco Responsability),,0,0,0,0,0,0,0,0,0,0,2012-02-15 08:00,,,2012-02-15 08:00,2012-02-15 08:00,,2012-02-15 08:00,2012-02-15 08:00,2012-02-15 08:00,2012-02-15 08:00,2012-02-15 08:00,2012-02-15 08:00,,2012-02-15 08:00,2012-02-15 08:00,CS_MSO,PT_Normal,,,,,mFqpw0/g90+z/35CeL36Cw,,,,Y,0,0,,,2012-06-20 11:04,2012-06-20 11:04,admin,admin,,,
372,83489,772,10541,794,1,0,N,N,N,CP_Drtn,TT_Task,DT_FixedDUR2,RV_OK,TK_NotStart,PRS44,Delivery of Structure Material at Site (4 Wks.),,0,0,224,0,0,0,224,0,0,0,,,,2012-05-16 08:00,2012-06-12 17:00,,2012-05-16 08:00,2012-06-12 17:00,2012-05-16 08:00,2012-06-12 17:00,2012-05-16 08:00,2012-06-12 17:00,,2012-05-16 08:00,2012-06-12 17:00,,PT_Normal,,,,,Sr71O7DTuUqkwV1Siuap9w,,,,Y,0,0,,,2012-06-20 11:04,2012-06-20 11:04,admin,admin,,,
373,83490,772,10542,794,1,0,N,N,N,CP_Drtn,TT_Task,DT_FixedDrtn,RV_OK,TK_NotStart,PRP41,"Pipeline 18"""" & Fittings",,0,0,408,0,0,0,408,0,0,0,2012-05-31 08:00,,,2012-05-31 08:00,2012-07-20 17:00,,2012-05-31 08:00,2012-07-20 17:00,2012-05-31 08:00,2012-07-20 17:00,2012-05-31 08:00,2012-07-20 17:00,,2012-05-31 08:00,2012-07-20 17:00,CS_MSO,PT_Normal,,,,,L49G5v8HpUuaxzTNSJYglw,,,,N,0,0,,,2012-06-20 11:04,2012-06-20 11:04,admin,admin,,,
374,83491,772,10542,794,1,0,N,N,N,CP_Drtn,TT_Task,DT_FixedDrtn,RV_OK,TK_NotStart,PRP82,"Pipeline 8"""" & Fittings",,-0.016667,351,408,0,0,0,408,0,0,0,2012-05-30 17:00,,,2012-05-30 16:59,2012-07-20 16:59,,2012-05-31 08:00,2012-07-20 17:00,2012-05-31 08:00,2012-07-20 17:00,2012-05-31 08:00,2012-07-20 17:00,,2012-05-30 16:59,2012-07-20 16:59,CS_MSO,PT_Normal,,,,,6gcGO8LIB0+MfqgrkfokoQ,yl9WvSBhsUKXjamnJ9tBwA,,,N,0,0,,,2012-06-20 11:04,2012-06-20 11:04,admin,admin,,,
375,83492,772,10552,794,1,0,N,N,N,CP_Drtn,TT_Task,DT_FixedDUR2,RV_OK,TK_NotStart,PRE47,Radar system,,-0.016667,904,240,0,0,0,240,0,0,0,2012-06-19 17:00,,,2012-06-19 16:59,2012-07-19 16:59,,2012-06-20 08:00,2012-07-19 17:00,2012-06-20 08:00,2012-07-19 17:00,2012-06-20 08:00,2012-07-19 17:00,,2012-06-19 16:59,2012-07-19 16:59,CS_MSO,PT_Normal,,,,,D8tTCrtYZUa0uNGVb2tNDA,hR+VpIi9/EScdnqRSGSfwg,,,N,0,0,,,2012-06-20 11:04,2012-06-20 11:04,admin,admin,,,
376,83493,772,10552,794,1,0,N,N,N,CP_Drtn,TT_Task,DT_FixedDUR2,RV_OK,TK_NotStart,PRE48,Navegation Aids,,-0.016667,1384,360,0,0,0,360,0,0,0,2012-04-05 17:00,,,2012-04-05 16:59,2012-05-20 16:59,,2012-04-06 08:00,2012-05-20 17:00,2012-04-06 08:00,2012-05-20 17:00,2012-04-06 08:00,2012-05-20 17:00,,2012-04-05 16:59,2012-05-20 16:59,CS_MSO,PT_Normal,,,,,KqNUB5kSCEGZyQ0sSYr2pA,BsriHSUEkEGgiUy2IxXEwg,,,N,0,0,,,2012-06-20 11:04,2012-06-20 11:04,admin,admin,,,
377,83494,772,10553,794,1,0,N,N,N,CP_Drtn,TT_Task,DT_FixedDUR2,RV_OK,TK_NotStart,PRE81,Electrical Bulks,,-0.016667,512,360,0,0,0,360,0,0,0,2012-07-23 17:00,,,2012-07-23 16:59,2012-09-06 16:59,,2012-07-24 08:00,2012-09-06 17:00,2012-07-24 08:00,2012-09-06 17:00,2012-07-24 08:00,2012-09-06 17:00,,2012-07-23 16:59,2012-09-06 16:59,CS_MSO,PT_Normal,,,,,Z9vo6okUtUSkieD7V9SkAw,,,,N,0,0,,,2012-06-20 11:04,2012-06-20 11:04,admin,admin,,,
378,83495,772,10553,794,1,0,N,N,N,CP_Drtn,TT_Task,DT_FixedDUR2,RV_OK,TK_NotStart,PRE82,Cathodic Protection,,-0.016667,1000,360,0,0,0,360,0,0,0,2012-05-23 17:00,,,2012-05-23 16:59,2012-07-07 16:59,,2012-05-24 08:00,2012-07-07 17:00,2012-05-24 08:00,2012-07-07 17:00,2012-05-24 08:00,2012-07-07 17:00,,2012-05-23 16:59,2012-07-07 16:59,CS_MSO,PT_Normal,,,,,Ab171MJzp0a8/kkeoJiiSw,,,,N,0,0,,,2012-06-20 11:04,2012-06-20 11:04,admin,admin,,,
379,83496,772,10553,794,1,0,N,N,N,CP_Drtn,TT_Task,DT_FixedDUR2,RV_OK,TK_NotStart,PRE83,Solar Power,,-0.016667,912,360,0,0,0,360,0,0,0,2012-06-03 17:00,,,2012-06-03 16:59,2012-07-18 16:59,,2012-06-04 08:00,2012-07-18 17:00,2012-06-04 08:00,2012-07-18 17:00,2012-06-04 08:00,2012-07-18 17:00,,2012-06-03 16:59,2012-07-18 16:59,CS_MSO,PT_Normal,,,,,fxgh1Rv35EO6hdFcch99oQ,,,,N,0,0,,,2012-06-20 11:04,2012-06-20 11:04,admin,admin,,,
380,83497,772,10550,794,1,0,N,N,N,CP_Drtn,TT_Task,DT_FixedDUR2,RV_OK,TK_NotStart,PRE44,F&G Detector,,-0.016667,648,360,0,0,0,360,0,0,0,2012-07-06 17:00,,,2012-07-06 16:59,2012-08-20 16:59,,2012-07-07 08:00,2012-08-20 17:00,2012-07-07 08:00,2012-08-20 17:00,2012-07-07 08:00,2012-08-20 17:00,,2012-07-06 16:59,2012-08-20 16:59,CS_MSO,PT_Normal,,,,,Oxs24VlZYEOxQAh+ynwTkA,hR+VpIi9/EScdnqRSGSfwg,,,N,0,0,,,2012-06-20 11:04,2012-06-20 11:04,admin,admin,,,
381,83498,772,10550,794,1,0,N,N,N,CP_Drtn,TT_Task,DT_FixedDUR2,RV_OK,TK_NotStart,PRE45,Fire fighting system,,-0.016667,720,360,0,0,0,360,0,0,0,2012-06-27 17:00,,,2012-06-27 16:59,2012-08-11 16:59,,2012-06-28 08:00,2012-08-11 17:00,2012-06-28 08:00,2012-08-11 17:00,2012-06-28 08:00,2012-08-11 17:00,,2012-06-27 16:59,2012-08-11 16:59,CS_MSO,PT_Normal,,,,,YjqAMOI4b0qqSAlQkn9WTQ,BsriHSUEkEGgiUy2IxXEwg,,,N,0,0,,,2012-06-20 11:04,2012-06-20 11:04,admin,admin,,,
382,83499,772,10550,794,1,0,N,N,N,CP_Drtn,TT_Task,DT_FixedDUR2,RV_OK,TK_NotStart,PRE46,Life Saving Equipment,,-0.016667,664,360,0,0,0,360,0,0,0,2012-07-04 17:00,,,2012-07-04 16:59,2012-08-18 16:59,,2012-07-05 08:00,2012-08-18 17:00,2012-07-05 08:00,2012-08-18 17:00,2012-07-05 08:00,2012-08-18 17:00,,2012-07-04 16:59,2012-08-18 16:59,CS_MSO,PT_Normal,,,,,PQHNurSkckOIka7NRgZf3Q,BMPt6NUgQkm3eBH1L9b0qA,,,N,0,0,,,2012-06-20 11:04,2012-06-20 11:04,admin,admin,,,
383,83500,772,10551,794,1,0,N,N,N,CP_Drtn,TT_Task,DT_FixedDUR2,RV_OK,TK_NotStart,PRE49,Instrument Electical Bulk,,-0.016667,624,240,0,0,0,240,0,0,0,2012-07-24 17:00,,,2012-07-24 16:59,2012-08-23 16:59,,2012-07-25 08:00,2012-08-23 17:00,2012-07-25 08:00,2012-08-23 17:00,2012-07-25 08:00,2012-08-23 17:00,,2012-07-24 16:59,2012-08-23 16:59,CS_MSO,PT_Normal,,,,,UZnRTQSDlkmh8sOs5CWhhA,hR+VpIi9/EScdnqRSGSfwg,,,N,0,0,,,2012-06-20 11:04,2012-06-20 11:04,admin,admin,,,
384,83501,772,10551,794,1,0,N,N,N,CP_Drtn,TT_Task,DT_FixedDUR2,RV_OK,TK_NotStart,PRE50,Instrument Mechanical Bulk,,-0.016667,640,280,0,0,0,280,0,0,0,2012-07-17 17:00,,,2012-07-17 16:59,2012-08-21 16:59,,2012-07-18 08:00,2012-08-21 17:00,2012-07-18 08:00,2012-08-21 17:00,2012-07-18 08:00,2012-08-21 17:00,,2012-07-17 16:59,2012-08-21 16:59,CS_MSO,PT_Normal,,,,,HxPv60Hv3Em52JLsXBPtEg,BsriHSUEkEGgiUy2IxXEwg,,,N,0,0,,,2012-06-20 11:04,2012-06-20 11:04,admin,admin,,,
385,83502,772,10551,794,1,0,N,N,N,CP_Drtn,TT_Task,DT_FixedDUR2,RV_OK,TK_NotStart,PRE91,Field Instrument,,-0.016667,760,360,0,0,0,360,0,0,0,2012-06-22 17:00,,,2012-06-22 16:59,2012-08-06 16:59,,2012-06-23 08:00,2012-08-06 17:00,2012-06-23 08:00,2012-08-06 17:00,2012-06-23 08:00,2012-08-06 17:00,,2012-06-22 16:59,2012-08-06 16:59,CS_MSO,PT_Normal,,,,,F4XSXh9kf0yvU72omBlazQ,BMPt6NUgQkm3eBH1L9b0qA,,,N,0,0,,,2012-06-20 11:04,2012-06-20 11:04,admin,admin,,,
386,83503,772,10551,794,1,0,N,N,N,CP_Drtn,TT_Task,DT_FixedDUR2,RV_OK,TK_NotStart,PRE92,multi phase flow meter,,-0.016667,1095,456,0,0,0,456,0,0,0,2012-07-17 17:00,,,2012-07-17 16:59,2012-09-12 16:59,,2012-07-18 08:00,2012-09-12 17:00,2012-07-18 08:00,2012-09-12 17:00,2012-07-18 08:00,2012-09-12 17:00,,2012-07-17 16:59,2012-09-12 16:59,CS_MSO,PT_Normal,,,,,lA2LqAm2P0K6MwGrA/be5g,Mkb86m2/TUuHJY33o39Fuw,,,N,0,0,,,2012-06-20 11:04,2012-06-20 11:04,admin,admin,,,
387,83504,772,10551,794,1,0,N,N,N,CP_Drtn,TT_Task,DT_FixedDUR2,RV_OK,TK_NotStart,PRE93,Safe Guard system,,-0.016667,1063,240,0,0,0,240,0,0,0,2012-08-17 17:00,,,2012-08-17 16:59,2012-09-16 16:59,,2012-08-18 08:00,2012-09-16 17:00,2012-08-18 08:00,2012-09-16 17:00,2012-08-18 08:00,2012-09-16 17:00,,2012-08-17 16:59,2012-09-16 16:59,CS_MSO,PT_Normal,,,,,CK4qbCQN60GyJLheJoTfdQ,,,,N,0,0,,,2012-06-20 11:04,2012-06-20 11:04,admin,admin,,,
388,83505,772,10543,841,1,0,N,N,N,CP_Drtn,TT_Task,DT_FixedDUR2,RV_OK,TK_NotStart,JK41,"Jacket , Boat Landing Fabrication & Painting",,208,0,1400,0,0,0,1400,0,0,0,,,,2012-07-22 08:00,2013-02-24 16:00,,2012-06-21 08:00,2013-01-22 16:00,2012-06-21 08:00,2013-01-22 16:00,2012-06-21 08:00,2013-01-22 16:00,,2012-07-22 08:00,2013-02-24 16:00,,PT_Normal,,,,,QDy5tcFMH0Sj/wYmNhvf/g,,,,N,0,0,,,2012-06-20 11:04,2012-06-20 11:04,admin,admin,,,
389,83506,772,10543,841,1,0,N,N,N,CP_Drtn,TT_Task,DT_FixedDUR2,RV_OK,TK_NotStart,JK42,Piles Fabrication & Marking,,592,592,1000,0,0,0,1000,0,0,0,,,,2012-11-08 08:00,2013-04-07 16:00,,2012-08-06 08:00,2013-01-08 16:00,2012-08-06 08:00,2013-01-08 16:00,2012-08-06 08:00,2013-01-08 16:00,,2012-11-08 08:00,2013-04-07 16:00,,PT_Normal,,,,,typzjHelA0OvwEGZLADW5w,,,,N,0,0,,,2012-06-20 11:04,2012-06-20 11:04,admin,admin,,,
390,83507,772,10554,841,1,0,N,N,N,CP_Drtn,TT_Task,DT_FixedDUR2,RV_OK,TK_NotStart,DS051,Fabrication and Painting of Below Production Deck/Legs,,0,0,840,0,0,0,840,0,0,0,,,,2012-06-13 08:00,2012-10-18 16:00,,2012-06-13 08:00,2012-10-18 16:00,2012-06-13 08:00,2012-10-18 16:00,2012-06-13 08:00,2012-10-18 16:00,,2012-06-13 08:00,2012-10-18 16:00,,PT_Normal,,,,,0vr1BjS3x0WTVH2logIeqw,,,,Y,0,0,,,2012-06-20 11:04,2012-06-20 11:04,admin,admin,,,
391,83508,772,10554,841,1,0,N,N,N,CP_Drtn,TT_Task,DT_FixedDUR2,RV_OK,TK_NotStart,DS052,Fabrication and Painting of Production Deck,,0,0,960,0,0,0,960,0,0,0,,,,2012-06-13 08:00,2012-11-08 16:00,,2012-06-13 08:00,2012-11-08 16:00,2012-06-13 08:00,2012-11-08 16:00,2012-06-13 08:00,2012-11-08 16:00,,2012-06-13 08:00,2012-11-08 16:00,,PT_Normal,,,,,nskh2d7TUEOr4WVJ5S9ezw,b7vZh9Ccpk+EXT4kXe5yzg,,,Y,0,0,,,2012-06-20 11:04,2012-06-20 11:04,admin,admin,,,
392,83509,772,10554,841,1,0,N,N,N,CP_Drtn,TT_Task,DT_FixedDUR2,RV_OK,TK_NotStart,DS053,Fabrication and Paint of Heli-Deck ( & Lifting if Required),,400,0,960,0,0,0,960,0,0,0,,,,2012-10-29 08:00,2013-03-21 16:00,,2012-08-27 08:00,2013-01-20 16:00,2012-08-27 08:00,2013-01-20 16:00,2012-08-27 08:00,2013-01-20 16:00,,2012-10-29 08:00,2013-03-21 16:00,,PT_Normal,,,,,DBtdSEhjF06PTIE8RSYgPA,JC1t+n1vH0eDZIP7mK52AA,,,N,0,0,,,2012-06-20 11:04,2012-06-20 11:04,admin,admin,,,
393,83510,772,10554,841,1,0,N,N,N,CP_Drtn,TT_Task,DT_FixedDUR2,RV_OK,TK_NotStart,DS054,Lifting Below Production Deck on High Cups,,24,0,40,0,0,0,40,0,0,0,,,,2012-10-23 08:00,2012-10-31 16:00,,2012-10-20 08:00,2012-10-24 16:00,2012-10-20 08:00,2012-10-24 16:00,2012-10-20 08:00,2012-10-24 16:00,,2012-10-23 08:00,2012-10-31 16:00,,PT_Normal,,,,,I2lQPMllg0SSTlnlUusjGg,,,,N,0,0,,,2012-06-20 11:04,2012-06-20 11:04,admin,admin,,,
394,83511,772,10554,841,1,0,N,N,N,CP_Drtn,TT_Task,DT_FixedDUR2,RV_OK,TK_NotStart,DS055,Lifting Production Deck on Below Production Level,,0,0,120,0,0,0,120,0,0,0,,,,2012-11-10 08:00,2012-11-27 16:00,,2012-11-10 08:00,2012-11-27 16:00,2012-11-10 08:00,2012-11-27 16:00,2012-11-10 08:00,2012-11-27 16:00,,2012-11-10 08:00,2012-11-27 16:00,,PT_Normal,,,,,Ucm3XedkKkSARPErBWRLJQ,,,,Y,0,0,,,2012-06-20 11:04,2012-06-20 11:04,admin,admin,,,
395,83512,772,10554,841,1,0,N,N,N,CP_Drtn,TT_Task,DT_FixedDUR2,RV_OK,TK_NotStart,DS056,Fabrication & Installation of Deck Str. Miscellence / Padeyes,,80,24,960,0,0,0,960,0,0,0,,,,2012-10-17 08:00,2013-03-13 16:00,,2012-10-04 08:00,2013-03-02 16:00,2012-10-04 08:00,2013-03-02 16:00,2012-10-04 08:00,2013-03-02 16:00,,2012-10-17 08:00,2013-03-13 16:00,,PT_Normal,,,,,HZS2YCxPPEWUHu28rP7TEQ,,,,N,0,0,,,2012-06-20 11:04,2012-06-20 11:04,admin,admin,,,
396,83513,772,10554,841,0,0,N,N,N,CP_Drtn,TT_FinMile,DT_FixedDrtn,RV_OK,TK_NotStart,DS057,Physical Weighting,,80,0,0,0,0,0,0,0,0,0,,,,2013-03-06 16:00,2013-03-06 16:00,,2013-02-23 16:00,2013-02-23 16:00,2013-02-23 16:00,2013-02-23 16:00,2013-02-23 16:00,2013-02-23 16:00,,2013-03-06 16:00,2013-03-06 16:00,,PT_Normal,,,,,kbQIPJ9KqkGMhqvwdsK+qQ,,,,N,0,0,,,2012-06-20 11:04,2012-06-20 11:04,admin,admin,,,
397,83514,772,10554,841,1,0,N,N,N,CP_Drtn,TT_Task,DT_FixedDUR2,RV_OK,TK_NotStart,DS048,Clearanse of structure (Fab. & Painting ) Punch List,,56,56,168,0,0,0,168,0,0,0,,,,2013-03-14 08:00,2013-04-07 16:00,,2013-03-06 08:00,2013-03-30 16:00,2013-03-06 08:00,2013-03-30 16:00,2013-03-06 08:00,2013-03-30 16:00,,2013-03-14 08:00,2013-04-07 16:00,,PT_Normal,,,,,yNLUFAocTkqX8+Hv622WYQ,,,,N,0,0,,,2012-06-20 11:04,2012-06-20 11:04,admin,admin,,,
398,83515,772,10556,841,1,0,N,N,N,CP_Drtn,TT_Task,DT_FixedDUR2,RV_OK,TK_NotStart,TFS041,Piping and Piping Supports Fabrication and Painting,,320,320,800,0,0,0,800,0,0,0,,,,2012-09-10 08:00,2013-01-10 16:00,,2012-07-21 08:00,2012-11-24 16:00,2012-07-21 08:00,2012-11-24 16:00,2012-07-21 08:00,2012-11-24 16:00,,2012-09-10 08:00,2013-01-10 16:00,,PT_Normal,,,,,SvRPue4baUmTMBN9jLCONg,,,,N,0,0,,,2012-06-20 11:04,2012-06-20 11:04,admin,admin,,,
399,83516,772,10556,841,1,0,N,N,N,CP_Drtn,TT_Task,DT_FixedDUR2,RV_OK,TK_NotStart,TSF042,Piping and Piping Supports Erection,,0,0,600,0,0,0,600,0,0,0,,,,2012-11-25 08:00,2013-02-23 16:00,,2012-11-25 08:00,2013-02-23 16:00,2012-11-25 08:00,2013-02-23 16:00,2012-11-25 08:00,2013-02-23 16:00,,2012-11-25 08:00,2013-02-23 16:00,,PT_Normal,,,,,im5ft3XbgE2mJ6Q89xGjcw,,,,Y,0,0,,,2012-06-20 11:04,2012-06-20 11:04,admin,admin,,,
400,83517,772,10557,841,1,0,N,N,N,CP_Drtn,TT_Task,DT_FixedDUR2,RV_OK,TK_NotStart,TSF053,Equipment Erection on Below Production Level,,24,24,56,0,0,0,56,0,0,0,,,,2012-11-01 08:00,2012-11-08 16:00,,2012-10-29 08:00,2012-11-05 16:00,2012-10-29 08:00,2012-11-05 16:00,2012-10-29 08:00,2012-11-05 16:00,,2012-11-01 08:00,2012-11-08 16:00,,PT_Normal,,,,,JtVsSvJnd0mdP3yxFD+jrg,,,,N,0,0,,,2012-06-20 11:04,2012-06-20 11:04,admin,admin,,,
401,83518,772,10557,841,1,0,N,N,N,CP_Drtn,TT_Task,DT_FixedDUR2,RV_OK,TK_NotStart,TSF054,Equipment Erection on Production Level,,216,216,120,0,0,0,120,0,0,0,,,,2012-12-30 08:00,2013-01-16 16:00,,2012-11-28 08:00,2012-12-15 16:00,2012-11-28 08:00,2012-12-15 16:00,2012-11-28 08:00,2012-12-15 16:00,,2012-12-30 08:00,2013-01-16 16:00,,PT_Normal,,,,,UL8/3UnNlk2udEV2mha9dA,,,,N,0,0,,,2012-06-20 11:04,2012-06-20 11:04,admin,admin,,,
402,83519,772,10557,841,1,0,N,N,N,CP_Drtn,TT_Task,DT_FixedDUR2,RV_OK,TK_NotStart,TSF055,Equipment Erection on Helideck,,400,400,56,0,0,0,56,0,0,0,,,,2013-02-16 08:00,2013-02-23 16:00,,2012-12-16 08:00,2012-12-23 16:00,2012-12-16 08:00,2012-12-23 16:00,2012-12-16 08:00,2012-12-23 16:00,,2013-02-16 08:00,2013-02-23 16:00,,PT_Normal,,,,,3e4/3w+6IEiggWEq3bp6lw,,,,N,0,0,,,2012-06-20 11:04,2012-06-20 11:04,admin,admin,,,
403,83520,772,10558,841,1,0,N,N,N,CP_Drtn,TT_Task,DT_FixedDUR2,RV_OK,TK_NotStart,TS47,E&I Activity,,16,16,720,0,0,0,720,0,0,0,,,,2012-11-12 08:00,2013-02-28 16:00,,2012-11-10 08:00,2013-02-26 16:00,2012-11-10 08:00,2013-02-26 16:00,2012-11-10 08:00,2013-02-26 16:00,,2012-11-12 08:00,2013-02-28 16:00,,PT_Normal,,,,,MHXrZL6aCEaI++9Uk58PJw,,,,N,0,0,,,2012-06-20 11:04,2012-06-20 11:04,admin,admin,,,
404,83521,772,10559,841,1,0,N,N,N,CP_Drtn,TT_Task,DT_FixedDUR2,RV_OK,TK_NotStart,TS48,"Pre-commissioning """" Piping Hydrotest , Reinstatment , Megering , Continuity Test and Touch Up """"",,0,0,280,0,0,0,280,0,0,0,,,,2013-02-18 08:00,2013-03-30 16:00,,2013-02-18 08:00,2013-03-30 16:00,2013-02-18 08:00,2013-03-30 16:00,2013-02-18 08:00,2013-03-30 16:00,,2013-02-18 08:00,2013-03-30 16:00,,PT_Normal,,,,,EcRyeT4cSEGO+KUdZbqUqQ,,,,Y,0,0,,,2012-06-20 11:04,2012-06-20 11:04,admin,admin,,,
405,83522,772,10546,841,1,0,N,N,N,CP_Drtn,TT_Task,DT_FixedDUR2,RV_OK,TK_NotStart,PL41,P/L Spools Fabrication,,832,0,720,0,0,0,720,0,0,0,,,,2012-11-07 08:00,2013-02-24 16:00,,2012-06-30 08:00,2012-10-17 16:00,2012-06-30 08:00,2012-10-17 16:00,2012-06-30 08:00,2012-10-17 16:00,,2012-11-07 08:00,2013-02-24 16:00,,PT_Normal,,,,,WVwN39wnIEKbD8/NtNjtDg,,,,N,0,0,,,2012-06-20 11:04,2012-06-20 11:04,admin,admin,,,
406,83523,772,10547,841,0,0,N,N,N,CP_Drtn,TT_Mile,DT_FixedDrtn,RV_OK,TK_NotStart,LOPS41,Arrival of 01st Shipment Material Barge ( P/L Spools),,0,128,0,0,0,0,0,0,0,0,2012-09-15 08:00,,,2012-09-15 08:00,2012-09-15 08:00,,2012-09-15 08:00,2012-09-15 08:00,2012-09-15 08:00,2012-09-15 08:00,2012-09-15 08:00,2012-09-15 08:00,,2012-09-15 08:00,2012-09-15 08:00,CS_MSO,PT_Normal,,,,,KnxZYpH/fkGg3lGKfHrTfQ,,,,N,0,0,,,2012-06-20 11:04,2012-06-20 11:04,admin,admin,,,
407,83524,772,10547,841,1,0,N,N,N,CP_Drtn,TT_Task,DT_FixedDUR2,RV_OK,TK_NotStart,LOPS42,1st Shipment Material Barge Preparation,,1088,0,96,0,0,0,96,0,0,0,,,,2013-03-20 08:00,2013-04-02 16:00,,2012-10-03 08:00,2012-10-17 16:00,2012-10-03 08:00,2012-10-17 16:00,2012-10-03 08:00,2012-10-17 16:00,,2013-03-20 08:00,2013-04-02 16:00,,PT_Normal,,,,,ArDTZe9R1EaAtH+atBhrkg,,,,N,0,0,,,2012-06-20 11:04,2012-06-20 11:04,admin,admin,,,
408,83525,772,10547,841,1,0,N,N,N,CP_Drtn,TT_Task,DT_FixedDUR2,RV_OK,TK_NotStart,LOPS43,"L/O & Sea Fastening (P/L Spools 18"""" & 8"""")",,1088,0,32,0,0,0,32,0,0,0,,,,2013-04-03 08:00,2013-04-07 16:00,,2012-10-18 08:00,2012-10-22 16:00,2012-10-18 08:00,2012-10-22 16:00,2012-10-18 08:00,2012-10-22 16:00,,2013-04-03 08:00,2013-04-07 16:00,,PT_Normal,,,,,UMaPaHSia02ry1O/N62vFA,,,,N,0,0,,,2012-06-20 11:04,2012-06-20 11:04,admin,admin,,,
409,83526,772,10548,841,0,0,N,N,N,CP_Drtn,TT_Mile,DT_FixedDrtn,RV_OK,TK_NotStart,LOJK41,Arrival of 02nd Shipment Material Barge ( Jacket and Piles ),,0,263.983333,0,0,0,0,0,0,0,0,2012-12-01 08:01,,,2012-12-01 08:01,2012-12-01 08:01,,2012-12-01 08:01,2012-12-01 08:01,2012-12-01 08:01,2012-12-01 08:01,2012-12-01 08:01,2012-12-01 08:01,,2012-12-01 08:01,2012-12-01 08:01,CS_MSO,PT_Normal,,,,,GkVYYOPpU0WG5v9DV9oy3w,,,,N,0,0,,,2012-06-20 11:04,2012-06-20 11:04,admin,admin,,,
410,83527,772,10548,841,1,0,N,N,N,CP_Drtn,TT_Task,DT_FixedDUR2,RV_OK,TK_NotStart,LOJK42,02nd Shipment Material Barge Preparation,,208,0,96,0,0,0,96,0,0,0,,,,2013-02-11 08:00,2013-02-24 16:00,,2013-01-09 08:00,2013-01-22 16:00,2013-01-09 08:00,2013-01-22 16:00,2013-01-09 08:00,2013-01-22 16:00,,2013-02-11 08:00,2013-02-24 16:00,,PT_Normal,,,,,+4TD36K7qkGEiG2qqki51g,,,,N,0,0,,,2012-06-20 11:04,2012-06-20 11:04,admin,admin,,,
411,83528,772,10548,841,1,0,N,N,N,CP_Drtn,TT_Task,DT_FixedDUR2,RV_OK,TK_NotStart,LOJK43,L/O & Sea fastening ( Jacket & Piles ),,208,0,56,0,0,0,56,0,0,0,,,,2013-02-25 08:00,2013-03-04 16:00,,2013-01-23 08:00,2013-01-31 16:00,2013-01-23 08:00,2013-01-31 16:00,2013-01-23 08:00,2013-01-31 16:00,,2013-02-25 08:00,2013-03-04 16:00,,PT_Normal,,,,,m88krIr/s0uEwnvtgMChyA,,,,N,0,0,,,2012-06-20 11:04,2012-06-20 11:04,admin,admin,,,
412,83529,772,10545,841,0,0,N,N,N,CP_Drtn,TT_Mile,DT_FixedDrtn,RV_OK,TK_NotStart,LODK41,Arrival of 03rd Shipment Material Barge ( Deck C/W TSF ),,-0.016667,104,0,0,0,0,0,0,0,0,2013-03-01 08:01,,,2013-02-28 15:59,2013-02-28 15:59,,2013-03-02 08:00,2013-03-02 08:00,2013-03-02 08:00,2013-03-02 08:00,2013-03-02 08:00,2013-03-02 08:00,,2013-02-28 15:59,2013-02-28 15:59,CS_MSO,PT_Normal,,,,,VndSX+r0KkeeNrK5TI+MaQ,,,,N,0,0,,,2012-06-20 11:04,2012-06-20 11:04,admin,admin,,,
413,83530,772,10545,841,1,0,N,N,N,CP_Drtn,TT_Task,DT_FixedDUR2,RV_OK,TK_NotStart,LODK42,3rd Shipment Material Barge Preparation,,0,0,96,0,0,0,96,0,0,0,,,,2013-03-17 08:00,2013-03-30 16:00,,2013-03-17 08:00,2013-03-30 16:00,2013-03-17 08:00,2013-03-30 16:00,2013-03-17 08:00,2013-03-30 16:00,,2013-03-17 08:00,2013-03-30 16:00,,PT_Normal,,,,,sCNresJXvkO5P/lokZaNVw,Z6hgNBy73kGKLbXx2xhiTA,,,Y,0,0,,,2012-06-20 11:04,2012-06-20 11:04,admin,admin,,,
414,83531,772,10545,841,1,0,N,N,N,CP_Drtn,TT_Task,DT_FixedDUR2,RV_OK,TK_NotStart,LODK43,L/O & Sea fastening ( Deck),,0,0,56,0,0,0,56,0,0,0,,,,2013-03-31 08:00,2013-04-07 16:00,,2013-03-31 08:00,2013-04-07 16:00,2013-03-31 08:00,2013-04-07 16:00,2013-03-31 08:00,2013-04-07 16:00,,2013-03-31 08:00,2013-04-07 16:00,,PT_Normal,,,,,MDzq6YSVckuMvggyJxruQQ,,,,Y,0,0,,,2012-06-20 11:04,2012-06-20 11:04,admin,admin,,,
415,83532,772,10542,794,1,0,N,N,N,CP_Drtn,TT_Task,DT_FixedDrtn,RV_OK,TK_NotStart,PRP92,"Pipeline 8"""" & Fittings",,-0.016667,2087,408,0,0,0,408,0,0,0,2012-05-30 17:00,,,2012-05-30 16:59,2012-07-20 16:59,,2012-05-31 08:00,2012-07-20 17:00,2012-05-31 08:00,2012-07-20 17:00,2012-05-31 08:00,2012-07-20 17:00,,2012-05-30 16:59,2012-07-20 16:59,CS_MSO,PT_Normal,,,,,tI8Hmp4XU02P4CWVajlBPg,Z/LKROCTRSGDBSNh6tw23g,,,N,0,0,,,2012-06-20 11:04,2012-06-20 11:04,admin,admin,,,
416,83533,772,10530,841,0,0,N,N,N,CP_Drtn,TT_FinMile,DT_FixedDrtn,RV_OK,TK_NotStart,GM51,Reciving Fax of Award,,-0.016667,0,0,0,0,0,0,0,0,0,2012-01-20 16:00,,,2012-01-19 16:00,2012-01-19 16:00,,2012-01-21 08:01,2012-01-21 08:01,2012-01-21 08:01,2012-01-21 08:01,2012-01-21 08:01,2012-01-21 08:01,,2012-01-19 16:00,2012-01-19 16:00,CS_MEO,PT_Normal,,,,,QA+Nkyu2RUCe7CUDJsDPPg,mAYBql7WQzuUeAh5RGjavw,,,N,0,0,,,2012-06-20 11:04,2012-06-20 11:04,admin,admin,,,
417,83534,772,10530,841,0,0,N,N,N,CP_Drtn,TT_Mile,DT_FixedDrtn,RV_OK,TK_NotStart,GM52,Project Fab. Start,,1951.983333,1952,0,0,0,0,0,0,0,0,,,,2013-04-07 15:59,2013-04-07 15:59,,2012-06-13 08:00,2012-06-13 08:00,2012-06-13 08:00,2012-06-13 08:00,2012-06-13 08:00,2012-06-13 08:00,,2013-04-07 15:59,2013-04-07 15:59,,PT_Normal,,,,,Qt/PAQxeC0W8dgVs728B8w,MUGR7HsxSCatq1Lsy+yI2A,,,N,0,0,,,2012-06-20 11:04,2012-06-20 11:04,admin,admin,,,
418,83535,772,10530,841,0,0,N,N,N,CP_Drtn,TT_Mile,DT_FixedDrtn,RV_OK,TK_NotStart,GM54,Ready for Load out ( 02nd Shipment/ Jacket & Piles ),,208,208,0,0,0,0,0,0,0,0,,,,2013-02-25 08:00,2013-02-25 08:00,,2013-01-23 08:00,2013-01-23 08:00,2013-01-23 08:00,2013-01-23 08:00,2013-01-23 08:00,2013-01-23 08:00,,2013-02-25 08:00,2013-02-25 08:00,,PT_Normal,,,,,hdnJ2J5uwUaUCXJWn2C7TQ,oEdGu9OnQ0CgAkVlSv8iuw,,,N,0,0,,,2012-06-20 11:04,2012-06-20 11:04,admin,admin,,,
419,83536,772,10530,841,0,0,N,N,N,CP_Drtn,TT_Mile,DT_FixedDrtn,RV_OK,TK_NotStart,GM55,Ready for Load out ( 03rd Shipment/ Deck C/W TSF ),,55.983333,56,0,0,0,0,0,0,0,0,,,,2013-04-07 15:59,2013-04-07 15:59,,2013-03-31 08:00,2013-03-31 08:00,2013-03-31 08:00,2013-03-31 08:00,2013-03-31 08:00,2013-03-31 08:00,,2013-04-07 15:59,2013-04-07 15:59,,PT_Normal,,,,,4hMWD2rKT0OxznQ6iAAT/Q,h7hpizZeQXG79P6YGic48A,,,N,0,0,,,2012-06-20 11:04,2012-06-20 11:04,admin,admin,,,
420,83537,772,10530,841,0,0,N,N,N,CP_Drtn,TT_Mile,DT_FixedDrtn,RV_OK,TK_NotStart,GM53,"Ready for Load out (01st Shipment / Pipeline Spools 18"""" & 8"""")",,1119.983333,1120,0,0,0,0,0,0,0,0,,,,2013-04-07 15:59,2013-04-07 15:59,,2012-10-18 08:00,2012-10-18 08:00,2012-10-18 08:00,2012-10-18 08:00,2012-10-18 08:00,2012-10-18 08:00,,2013-04-07 15:59,2013-04-07 15:59,,PT_Normal,,,,,0Qp0liMX8kqzoLGrtMveTA,hwMqvqcnTaWjHD3UCB8GZQ,,,N,0,0,,,2012-06-20 11:04,2012-06-20 11:04,admin,admin,,,
421,83538,772,10536,794,1,0,N,N,N,CP_Drtn,TT_Task,DT_FixedDrtn,RV_OK,TK_NotStart,ENS53,Receiving Jacket Primary & Secondary Steel IFC DWG`s,,0,0,1104,0,0,0,1104,0,0,0,2011-11-30 08:01,,,2011-11-30 08:01,2012-04-16 08:01,,2011-11-30 08:01,2012-04-16 08:01,2011-11-30 08:01,2012-04-16 08:01,2011-11-30 08:01,2012-04-16 08:01,,2011-11-30 08:01,2012-04-16 08:01,CS_MSO,PT_Normal,,,,,KzHQb4tYjEWgqhG/hE5CAQ,/taVGz7GStKxIdbmdm3JkA,,,N,0,0,,,2012-06-20 11:04,2012-06-20 11:04,admin,admin,,,
422,83539,772,10536,794,0,0,N,N,N,CP_Drtn,TT_FinMile,DT_FixedDrtn,RV_OK,TK_NotStart,ENS54,Receiving Piles IFC DWG`s,,0,720,0,0,0,0,0,0,0,0,2012-01-17 08:01,,,2012-01-17 08:01,2012-01-17 08:01,,2012-01-17 08:01,2012-01-17 08:01,2012-01-17 08:01,2012-01-17 08:01,2012-01-17 08:01,2012-01-17 08:01,,2012-01-17 08:01,2012-01-17 08:01,CS_MEO,PT_Normal,,,,,rI6l1fM3CkqBa4jY34AAZw,Na3Aup6tShC+yRgy8OADFw,,,N,0,0,,,2012-06-20 11:04,2012-06-20 11:04,admin,admin,,,
423,83540,772,10536,794,1,0,N,N,N,CP_Drtn,TT_Task,DT_FixedDUR2,RV_OK,TK_NotStart,ENS55,Receiving Deck Str. Primary & Secondary IFC DWG`s,,0,224,328,0,0,0,328,0,0,0,2012-02-07 08:01,,,2012-02-07 08:01,2012-03-19 08:01,,2012-02-07 08:01,2012-03-19 08:01,2012-02-07 08:01,2012-03-19 08:01,2012-02-07 08:01,2012-03-19 08:01,,2012-02-07 08:01,2012-03-19 08:01,CS_MSO,PT_Normal,,,,,L9+6jmGhZ0ysXrippZlbXw,fi7weAl5SEGTR2lLUeKx/w,,,N,0,0,,,2012-06-20 11:04,2012-06-20 11:04,admin,admin,,,
424,83541,772,10536,794,0,0,N,N,N,CP_Drtn,TT_FinMile,DT_FixedDrtn,RV_OK,TK_NotStart,ENS51,"Receiving Final Jacket , Boat Land & Piles MTO",,135.983333,135.983333,0,0,0,0,0,0,0,0,,,,2012-02-14 17:00,2012-02-14 17:00,,2012-01-29 08:01,2012-01-29 08:01,2012-01-29 08:01,2012-01-29 08:01,2012-01-29 08:01,2012-01-29 08:01,,2012-02-14 17:00,2012-02-14 17:00,,PT_Normal,,,,,pvGTpW4TSkqtpFXY5meLvg,TPEjRmwKRrq6hsy6oKat/g,,,N,0,0,,,2012-06-20 11:04,2012-06-20 11:04,admin,admin,,,
425,83542,772,10536,794,0,0,N,N,N,CP_Drtn,TT_FinMile,DT_FixedDrtn,RV_OK,TK_NotStart,ENS52,Receiving Final Deck Str. MTO,,135.983333,135.983333,0,0,0,0,0,0,0,0,,,,2012-02-14 17:00,2012-02-14 17:00,,2012-01-29 08:01,2012-01-29 08:01,2012-01-29 08:01,2012-01-29 08:01,2012-01-29 08:01,2012-01-29 08:01,,2012-02-14 17:00,2012-02-14 17:00,,PT_Normal,,,,,WqLH7CkKY0iWpy/INZBbAg,6nkSfB2oQqWjhNUPP6KgpA,,,N,0,0,,,2012-06-20 11:04,2012-06-20 11:04,admin,admin,,,
426,83543,772,10536,794,1,0,N,N,N,CP_Drtn,TT_Task,DT_FixedDrtn,RV_OK,TK_NotStart,ENS58,Receiving IFC Equipment fixation DWG`s,,0,1559.983333,104,0,0,0,104,0,0,0,2012-04-04 08:01,,,2012-04-04 08:01,2012-04-17 08:01,,2012-04-04 08:01,2012-04-17 08:01,2012-04-04 08:01,2012-04-17 08:01,2012-04-04 08:01,2012-04-17 08:01,,2012-04-04 08:01,2012-04-17 08:01,CS_MSO,PT_Normal,,,,,bA8s9CZaI0uWCLiGfVEXEw,mm1mBipHSJKSJiX6ECgsuA,,,N,0,0,,,2012-06-20 11:04,2012-06-20 11:04,admin,admin,,,
427,83544,772,10536,794,1,0,N,N,N,CP_Drtn,TT_Task,DT_FixedDUR2,RV_OK,TK_NotStart,ENS56,Receiving Piping Supports IFC DWG's,,0,3078.983333,160,0,0,0,160,0,0,0,2012-02-28 08:01,,,2012-02-28 08:01,2012-03-19 08:01,,2012-02-28 08:01,2012-03-19 08:01,2012-02-28 08:01,2012-03-19 08:01,2012-02-28 08:01,2012-03-19 08:01,,2012-02-28 08:01,2012-03-19 08:01,CS_MSO,PT_Normal,,,,,mGu3On0NUkOSuFTL7ANG7Q,00Owhd0XR8uvJLKhPzMELA,,,N,0,0,,,2012-06-20 11:04,2012-06-20 11:04,admin,admin,,,
428,83545,772,10536,794,1,0,N,N,N,CP_Drtn,TT_Task,DT_FixedDUR2,RV_OK,TK_NotStart,ENS57,Receiving Cable tarys Support IFC DWG's,,0,3022.983333,104,0,0,0,104,0,0,0,2012-03-13 08:01,,,2012-03-13 08:01,2012-03-26 08:01,,2012-03-13 08:01,2012-03-26 08:01,2012-03-13 08:01,2012-03-26 08:01,2012-03-13 08:01,2012-03-26 08:01,,2012-03-13 08:01,2012-03-26 08:01,CS_MSO,PT_Normal,,,,,JNP+11C9+0q48/JOw96w6g,JPgGdggzREiAYSQ7vnqU2w,,,N,0,0,,,2012-06-20 11:04,2012-06-20 11:04,admin,admin,,,
429,83546,772,10536,794,1,0,N,N,N,CP_Drtn,TT_Task,DT_FixedDrtn,RV_OK,TK_NotStart,ENS59,"Receiving P/L 8"""" & 18"""" IFC DWG's",,0,2736,160,0,0,0,160,0,0,0,2012-04-10 16:00,,,2012-04-10 16:00,2012-04-30 16:00,,2012-04-10 16:00,2012-04-30 16:00,2012-04-10 16:00,2012-04-30 16:00,2012-04-10 16:00,2012-04-30 16:00,,2012-04-10 16:00,2012-04-30 16:00,CS_MSO,PT_Normal,,,,,J6q9WFGU1Uqx/CoKjiPhUQ,98Xxuu9fQZixtpBjPwMmlQ,,,N,0,0,,,2012-06-20 11:04,2012-06-20 11:04,admin,admin,,,
430,83547,772,10537,794,1,0,N,N,N,CP_Drtn,TT_Task,DT_FixedDrtn,RV_OK,TK_NotStart,ENT53,Receiving Piping ISO`s IFC DWG's,,0,1047.983333,112,0,0,0,112,0,0,0,2012-02-27 08:01,,,2012-02-27 08:01,2012-03-12 08:01,,2012-02-27 08:01,2012-03-12 08:01,2012-02-27 08:01,2012-03-12 08:01,2012-02-27 08:01,2012-03-12 08:01,,2012-02-27 08:01,2012-03-12 08:01,CS_MSO,PT_Normal,,,,,FY9wlA2wnkScfe5T/wNbkg,enOOp99+SsqEvqB5hnSgoA,,,N,0,0,,,2012-06-20 11:04,2012-06-20 11:04,admin,admin,,,
431,83548,772,10537,794,0,0,N,N,N,CP_Drtn,TT_FinMile,DT_FixedDrtn,RV_OK,TK_NotStart,ENT51,Issue Approved P&ID's / Equipment List IFC DWG's,,0,3584,0,0,0,0,0,0,0,0,2012-01-15 16:00,,,2012-01-15 16:00,2012-01-15 16:00,,2012-01-15 16:00,2012-01-15 16:00,2012-01-15 16:00,2012-01-15 16:00,2012-01-15 16:00,2012-01-15 16:00,,2012-01-15 16:00,2012-01-15 16:00,CS_MEO,PT_Normal,,,,,bPScifo+BEqrshExQqCbaA,93sGNlW6QoCv/1ksHG2NzA,,,N,0,0,,,2012-06-20 11:04,2012-06-20 11:04,admin,admin,,,
432,83549,772,10537,794,0,0,N,N,N,CP_Drtn,TT_FinMile,DT_FixedDrtn,RV_OK,TK_NotStart,ENT52,Issue plat plans IFC DWG's,,0,3408,0,0,0,0,0,0,0,0,2012-02-06 16:00,,,2012-02-06 16:00,2012-02-06 16:00,,2012-02-06 16:00,2012-02-06 16:00,2012-02-06 16:00,2012-02-06 16:00,2012-02-06 16:00,2012-02-06 16:00,,2012-02-06 16:00,2012-02-06 16:00,CS_MEO,PT_Normal,,,,,oCFObmw4h02HsNGBgsZDsw,FmX28kBFQpGSXexVmL7Wlw,,,N,0,0,,,2012-06-20 11:04,2012-06-20 11:04,admin,admin,,,
433,83550,772,10537,841,0,0,N,N,N,CP_Drtn,TT_FinMile,DT_FixedDrtn,RV_OK,TK_NotStart,ENT54,Issue Hydrotest maps & loops IFC DWG's,,0,2648,0,0,0,0,0,0,0,0,2012-02-28 16:00,,,2012-02-28 16:00,2012-02-28 16:00,,2012-02-28 16:00,2012-02-28 16:00,2012-02-28 16:00,2012-02-28 16:00,2012-02-28 16:00,2012-02-28 16:00,,2012-02-28 16:00,2012-02-28 16:00,CS_MEO,PT_Normal,,,,,rhhBmNrJckirY7Wv3ILRxg,5DGNq1VSTqKaHuj3eSEIjw,,,N,0,0,,,2012-06-20 11:04,2012-06-20 11:04,admin,admin,,,
434,83551,772,10538,794,1,0,N,N,N,CP_Drtn,TT_Task,DT_FixedDUR2,RV_OK,TK_NotStart,ENE51,Receiving E&I IFC DWG`s,,0,2279.983333,776,0,0,0,776,0,0,0,2012-01-23 08:01,,,2012-01-23 08:01,2012-04-29 08:01,,2012-01-23 08:01,2012-04-29 08:01,2012-01-23 08:01,2012-04-29 08:01,2012-01-23 08:01,2012-04-29 08:01,,2012-01-23 08:01,2012-04-29 08:01,CS_MSO,PT_Normal,,,,,SPZ0SHourEGnrns7DoYRJw,3Z6l8wXrS6642p/eM8yB1A,,,N,0,0,,,2012-06-20 11:04,2012-06-20 11:04,admin,admin,,,
435,83552,772,10532,841,1,0,N,N,N,CP_Drtn,TT_Task,DT_FixedDUR2,RV_OK,TK_NotStart,PF51,Pre-Fabrication of Steel Structure ( Jacket & Piles),,208,0,960,0,0,0,960,0,0,0,,,,2012-07-14 08:00,2012-12-10 16:00,,2012-06-13 08:00,2012-11-08 16:00,2012-06-13 08:00,2012-11-08 16:00,2012-06-13 08:00,2012-11-08 16:00,,2012-07-14 08:00,2012-12-10 16:00,,PT_Normal,,,,,KPCH4pNiiUCurJqEFgSUnQ,BUUxQXUKQcKvFYRqrGtbRg,,,N,0,0,,,2012-06-20 11:04,2012-06-20 11:04,admin,admin,,,
436,83553,772,10539,794,1,0,N,N,N,CP_Drtn,TT_Task,DT_FixedDUR2,RV_OK,TK_NotStart,PRT101,Piping Bulk material 1st batch,,-0.016667,536,240,0,0,0,240,0,0,0,2012-05-07 17:00,,,2012-05-07 16:59,2012-06-06 16:59,,2012-05-08 08:00,2012-06-06 17:00,2012-05-08 08:00,2012-06-06 17:00,2012-05-08 08:00,2012-06-06 17:00,,2012-05-07 16:59,2012-06-06 16:59,CS_MSO,PT_Normal,,,,,AixPBbZHm0SEYfWzdayLAw,DqLN36xRQY+kZsfpyGsU9w,,,N,0,0,,,2012-06-20 11:04,2012-06-20 11:04,admin,admin,,,
437,83554,772,10539,794,1,0,N,N,N,CP_Drtn,TT_Task,DT_FixedDUR2,RV_OK,TK_NotStart,PRT102,Piping Bulk material 2nd batch,,-0.016667,855,240,0,0,0,240,0,0,0,2012-06-10 17:00,,,2012-06-10 16:59,2012-07-10 16:59,,2012-06-11 08:00,2012-07-10 17:00,2012-06-11 08:00,2012-07-10 17:00,2012-06-11 08:00,2012-07-10 17:00,,2012-06-10 16:59,2012-07-10 16:59,CS_MSO,PT_Normal,,,,,R9qpuY2chkusq+UkG/bUCg,fRmh57i3SamJM0o1p2/3vA,,,N,0,0,,,2012-06-20 11:04,2012-06-20 11:04,admin,admin,,,
438,83555,772,10539,794,1,0,N,N,N,CP_Drtn,TT_Task,DT_FixedDUR2,RV_OK,TK_NotStart,PRT53,Piping Valves Bulk material 1st batch,,-0.016667,999,112,0,0,0,112,0,0,0,2012-06-23 17:00,,,2012-06-23 16:59,2012-07-07 16:59,,2012-06-24 08:00,2012-07-07 17:00,2012-06-24 08:00,2012-07-07 17:00,2012-06-24 08:00,2012-07-07 17:00,,2012-06-23 16:59,2012-07-07 16:59,CS_MSO,PT_Normal,,,,,ZB87HJessk2RCWvG8zCwzA,7wg9/w/MQ7a7zI20+pTM+A,,,N,0,0,,,2012-06-20 11:04,2012-06-20 11:04,admin,admin,,,
439,83556,772,10539,794,1,0,N,N,N,CP_Drtn,TT_Task,DT_FixedDUR2,RV_OK,TK_NotStart,PRT54,Piping valves Bulk material 2nd batch,,-0.016667,767,112,0,0,0,112,0,0,0,2012-07-22 17:00,,,2012-07-22 16:59,2012-08-05 16:59,,2012-07-23 08:00,2012-08-05 17:00,2012-07-23 08:00,2012-08-05 17:00,2012-07-23 08:00,2012-08-05 17:00,,2012-07-22 16:59,2012-08-05 16:59,CS_MSO,PT_Normal,,,,,Ga/V2hDZiE+OFq2CmZKaCg,iGFfO+XNTpqt+16+eOx2EA,,,N,0,0,,,2012-06-20 11:04,2012-06-20 11:04,admin,admin,,,
440,83557,772,10539,794,1,0,N,N,N,CP_Drtn,TT_Task,DT_FixedDUR2,RV_OK,TK_NotStart,PRT55,Flanges,,-0.016667,8,360,0,0,0,360,0,0,0,2012-07-13 17:00,,,2012-07-13 16:59,2012-08-27 16:59,,2012-07-14 08:00,2012-08-27 17:00,2012-07-14 08:00,2012-08-27 17:00,2012-07-14 08:00,2012-08-27 17:00,,2012-07-13 16:59,2012-08-27 16:59,CS_MSO,PT_Normal,,,,,zZ7O6FnOpEKM2tvPiEgjhg,VAq1SSMERrmj1gqIqoQiTg,,,N,0,0,,,2012-06-20 11:04,2012-06-20 11:04,admin,admin,,,
441,83558,772,10539,794,1,0,N,N,N,CP_Drtn,TT_Task,DT_FixedDUR2,RV_OK,TK_NotStart,PRT56,Pressure Safety Valve,,-0.016667,1519,352,0,0,0,352,0,0,0,2012-06-04 17:00,,,2012-06-04 16:59,2012-07-18 16:59,,2012-06-05 08:00,2012-07-18 17:00,2012-06-05 08:00,2012-07-18 17:00,2012-06-05 08:00,2012-07-18 17:00,,2012-06-04 16:59,2012-07-18 16:59,CS_MSO,PT_Normal,,,,,YWJZiVSi4kuGiLoi6Lq6lw,+SvOOjbVT6SM2f4LWOHEpg,,,N,0,0,,,2012-06-20 11:04,2012-06-20 11:04,admin,admin,,,
442,83559,772,10539,794,1,0,N,N,N,CP_Drtn,TT_Task,DT_FixedDUR2,RV_OK,TK_NotStart,PRT57,Pressure regulator Valve,,-0.016667,1231,240,0,0,0,240,0,0,0,2012-07-24 17:00,,,2012-07-24 16:59,2012-08-23 16:59,,2012-07-25 08:00,2012-08-23 17:00,2012-07-25 08:00,2012-08-23 17:00,2012-07-25 08:00,2012-08-23 17:00,,2012-07-24 16:59,2012-08-23 16:59,CS_MSO,PT_Normal,,,,,ezh0byA580+sciI3jaXssg,FkVucARhQlCiyikicegBhQ,,,N,0,0,,,2012-06-20 11:04,2012-06-20 11:04,admin,admin,,,
443,83560,772,10539,794,1,0,N,N,N,CP_Drtn,TT_Task,DT_FixedDUR2,RV_OK,TK_NotStart,PRT58,Shutdown Valve,,-0.016667,1135,248,0,0,0,248,0,0,0,2012-08-04 17:00,,,2012-08-04 16:59,2012-09-04 16:59,,2012-08-05 08:00,2012-09-04 17:00,2012-08-05 08:00,2012-09-04 17:00,2012-08-05 08:00,2012-09-04 17:00,,2012-08-04 16:59,2012-09-04 16:59,CS_MSO,PT_Normal,,,,,yz1Vk3xNa0aZmx9zjZPK6w,GViNUzKNR0i8XYjXx02J5Q,,,N,0,0,,,2012-06-20 11:04,2012-06-20 11:04,admin,admin,,,
444,83561,772,10540,794,1,0,N,N,N,CP_Drtn,TT_Task,DT_FixedDUR2,RV_OK,TK_NotStart,PRT59,Chemical Injection PKG.,,-0.016667,1264,360,0,0,0,360,0,0,0,2012-05-08 17:00,,,2012-05-08 16:59,2012-06-22 16:59,,2012-05-09 08:00,2012-06-22 17:00,2012-05-09 08:00,2012-06-22 17:00,2012-05-09 08:00,2012-06-22 17:00,,2012-05-08 16:59,2012-06-22 16:59,CS_MSO,PT_Normal,,,,,CCuxhbeKJEWzgwjgiY/flQ,eKvs6VRWSyOb6HNtkF9+AA,,,N,0,0,,,2012-06-20 11:04,2012-06-20 11:04,admin,admin,,,
445,83562,772,10540,794,1,0,N,N,N,CP_Drtn,TT_Task,DT_FixedDUR2,RV_OK,TK_NotStart,PRT60,Launcher recivier,,-0.016667,960,360,0,0,0,360,0,0,0,2012-06-15 17:00,,,2012-06-15 16:59,2012-07-30 16:59,,2012-06-16 08:00,2012-07-30 17:00,2012-06-16 08:00,2012-07-30 17:00,2012-06-16 08:00,2012-07-30 17:00,,2012-06-15 16:59,2012-07-30 16:59,CS_MSO,PT_Normal,,,,,7HYvu3EYdE6l/73gQRrWLw,3IwzhhfhR3KgxUsvdJ6rqQ,,,N,0,0,,,2012-06-20 11:04,2012-06-20 11:04,admin,admin,,,
446,83563,772,10540,794,1,0,N,N,N,CP_Drtn,TT_Task,DT_FixedDUR2,RV_OK,TK_NotStart,PRT111,Vent KOD,,-0.016667,864,360,0,0,0,360,0,0,0,2012-06-27 17:00,,,2012-06-27 16:59,2012-08-11 16:59,,2012-06-28 08:00,2012-08-11 17:00,2012-06-28 08:00,2012-08-11 17:00,2012-06-28 08:00,2012-08-11 17:00,,2012-06-27 16:59,2012-08-11 16:59,CS_MSO,PT_Normal,,,,,ggGfLM6SF0io1AJIdoMUrg,V+De5pWvTHyHzJo6bSHRww,,,N,0,0,,,2012-06-20 11:04,2012-06-20 11:04,admin,admin,,,
447,83564,772,10540,794,1,0,N,N,N,CP_Drtn,TT_Task,DT_FixedDUR2,RV_OK,TK_NotStart,PRT112,Open Drain Tank,,-0.016667,624,360,0,0,0,360,0,0,0,2012-06-27 17:00,,,2012-06-27 16:59,2012-08-11 16:59,,2012-06-28 08:00,2012-08-11 17:00,2012-06-28 08:00,2012-08-11 17:00,2012-06-28 08:00,2012-08-11 17:00,,2012-06-27 16:59,2012-08-11 16:59,CS_MSO,PT_Normal,,,,,2+Bzks++SEOh8OrUAAKneA,Dvo6DiXYTvSm95/lOoAUnw,,,N,0,0,,,2012-06-20 11:04,2012-06-20 11:04,admin,admin,,,
448,83565,772,10541,794,1,0,N,N,N,CP_Drtn,TT_Task,DT_FixedDUR2,RV_OK,TK_NotStart,PRS53,Delivery of Structure Material (F.O.B - 13 Wks.) - (Gupco Responsability),,0,0,728,0,0,0,728,0,0,0,,,,2012-02-15 08:00,2012-05-15 17:00,,2012-02-15 08:00,2012-05-15 17:00,2012-02-15 08:00,2012-05-15 17:00,2012-02-15 08:00,2012-05-15 17:00,,2012-02-15 08:00,2012-05-15 17:00,,PT_Normal,,,,,yokPRQmlP0W5ZYX1bEEW8Q,dmjGd5dtRyGQN7eIgjvWtA,,,Y,0,0,,,2012-06-20 11:04,2012-06-20 11:04,admin,admin,,,
449,83566,772,10541,794,1,0,N,N,N,CP_Drtn,TT_Task,DT_FixedDUR2,RV_OK,TK_NotStart,PRS55,Material check with IFC DWG's to Prepare balance material,,1566.983333,0,56,0,0,0,56,0,0,0,,,,2012-10-28 16:00,2012-11-04 16:00,,2012-04-16 08:01,2012-04-23 08:01,2012-04-16 08:01,2012-04-23 08:01,2012-04-16 08:01,2012-04-23 08:01,,2012-10-28 16:00,2012-11-04 16:00,,PT_Normal,,,,,5GqTPomRi0Wm+6XKE2veqA,TiJCnNvxQjGqD/lEVDLgtw,,,N,0,0,,,2012-06-20 11:04,2012-06-20 11:04,admin,admin,,,
450,83567,772,10541,794,1,0,N,N,N,CP_Drtn,TT_Task,DT_FixedDUR2,RV_OK,TK_NotStart,PRS56,Delivery of balance material,,1566.983333,1566.983333,1232,0,0,0,1232,0,0,0,,,,2012-11-04 16:00,2013-04-07 16:00,,2012-04-23 08:01,2012-09-24 08:01,2012-04-23 08:01,2012-09-24 08:01,2012-04-23 08:01,2012-09-24 08:01,,2012-11-04 16:00,2013-04-07 16:00,,PT_Normal,,,,,9PGphl2isU+haNG6jK1Cfg,oU6FnPOSQS+kCV/HY5y5yA,,,N,0,0,,,2012-06-20 11:04,2012-06-20 11:04,admin,admin,,,
451,83568,772,10541,794,0,0,N,N,N,CP_Drtn,TT_Mile,DT_FixedDrtn,RV_OK,TK_NotStart,PRS51,Issue Structural Material P.O's ( Gupco Responsability),,0,64,0,0,0,0,0,0,0,0,2012-02-07 08:00,,,2012-02-07 08:00,2012-02-07 08:00,,2012-02-07 08:00,2012-02-07 08:00,2012-02-07 08:00,2012-02-07 08:00,2012-02-07 08:00,2012-02-07 08:00,,2012-02-07 08:00,2012-02-07 08:00,CS_MSO,PT_Normal,,,,,KUZ8iQI4E0OXYQ6ydkbEUw,xF9X1iufT72bd1+OFKWOyQ,,,N,0,0,,,2012-06-20 11:04,2012-06-20 11:04,admin,admin,,,
452,83569,772,10541,794,0,0,N,N,N,CP_Drtn,TT_Mile,DT_FixedDrtn,RV_OK,TK_NotStart,PRS52,Issue LC ( Gupco Responsability),,0,0,0,0,0,0,0,0,0,0,2012-02-15 08:00,,,2012-02-15 08:00,2012-02-15 08:00,,2012-02-15 08:00,2012-02-15 08:00,2012-02-15 08:00,2012-02-15 08:00,2012-02-15 08:00,2012-02-15 08:00,,2012-02-15 08:00,2012-02-15 08:00,CS_MSO,PT_Normal,,,,,dPb3SrTjIkuPk9iryfDe6A,um/v71UCSm2K8HwIWZ36mg,,,Y,0,0,,,2012-06-20 11:04,2012-06-20 11:04,admin,admin,,,
453,83570,772,10541,794,1,0,N,N,N,CP_Drtn,TT_Task,DT_FixedDUR2,RV_OK,TK_NotStart,PRS54,Delivery of Structure Material at Site (4 Wks.),,0,0,224,0,0,0,224,0,0,0,,,,2012-05-16 08:00,2012-06-12 17:00,,2012-05-16 08:00,2012-06-12 17:00,2012-05-16 08:00,2012-06-12 17:00,2012-05-16 08:00,2012-06-12 17:00,,2012-05-16 08:00,2012-06-12 17:00,,PT_Normal,,,,,eORSxNW9T0SbsLncY7di1g,FqPfFJhLQ+SL9TfNEDcs7w,,,Y,0,0,,,2012-06-20 11:04,2012-06-20 11:04,admin,admin,,,
454,83571,772,10542,794,1,0,N,N,N,CP_Drtn,TT_Task,DT_FixedDrtn,RV_OK,TK_NotStart,PRP51,"Pipeline 18"""" & Fittings",,0,0,408,0,0,0,408,0,0,0,2012-05-31 08:00,,,2012-05-31 08:00,2012-07-20 17:00,,2012-05-31 08:00,2012-07-20 17:00,2012-05-31 08:00,2012-07-20 17:00,2012-05-31 08:00,2012-07-20 17:00,,2012-05-31 08:00,2012-07-20 17:00,CS_MSO,PT_Normal,,,,,KXh3ee8wMEWo2SXMEpa8Kg,8zKzqtp8RUKmTAsXxykRFA,,,N,0,0,,,2012-06-20 11:04,2012-06-20 11:04,admin,admin,,,
455,83572,772,10542,794,1,0,N,N,N,CP_Drtn,TT_Task,DT_FixedDrtn,RV_OK,TK_NotStart,PRP102,"Pipeline 8"""" & Fittings",,-0.016667,351,408,0,0,0,408,0,0,0,2012-05-30 17:00,,,2012-05-30 16:59,2012-07-20 16:59,,2012-05-31 08:00,2012-07-20 17:00,2012-05-31 08:00,2012-07-20 17:00,2012-05-31 08:00,2012-07-20 17:00,,2012-05-30 16:59,2012-07-20 16:59,CS_MSO,PT_Normal,,,,,GcZgud4R+U6BOkD3Q+Qj6Q,Z/LKROCTRSGDBSNh6tw23g,,,N,0,0,,,2012-06-20 11:04,2012-06-20 11:04,admin,admin,,,
456,83573,772,10552,794,1,0,N,N,N,CP_Drtn,TT_Task,DT_FixedDUR2,RV_OK,TK_NotStart,PRE57,Radar system,,-0.016667,904,240,0,0,0,240,0,0,0,2012-06-19 17:00,,,2012-06-19 16:59,2012-07-19 16:59,,2012-06-20 08:00,2012-07-19 17:00,2012-06-20 08:00,2012-07-19 17:00,2012-06-20 08:00,2012-07-19 17:00,,2012-06-19 16:59,2012-07-19 16:59,CS_MSO,PT_Normal,,,,,In1KOjx83ESSNV+73J7uhA,fN9/pTqqS/2bIA0m5B7Ztw,,,N,0,0,,,2012-06-20 11:04,2012-06-20 11:04,admin,admin,,,
457,83574,772,10552,794,1,0,N,N,N,CP_Drtn,TT_Task,DT_FixedDUR2,RV_OK,TK_NotStart,PRE58,Navegation Aids,,-0.016667,1384,360,0,0,0,360,0,0,0,2012-04-05 17:00,,,2012-04-05 16:59,2012-05-20 16:59,,2012-04-06 08:00,2012-05-20 17:00,2012-04-06 08:00,2012-05-20 17:00,2012-04-06 08:00,2012-05-20 17:00,,2012-04-05 16:59,2012-05-20 16:59,CS_MSO,PT_Normal,,,,,WwgPB6O7wU2meUxvPHV/dg,/agS5N51QBGq3ZFFA4yHkQ,,,N,0,0,,,2012-06-20 11:04,2012-06-20 11:04,admin,admin,,,
458,83575,772,10553,794,1,0,N,N,N,CP_Drtn,TT_Task,DT_FixedDUR2,RV_OK,TK_NotStart,PRE101,Electrical Bulks,,-0.016667,512,360,0,0,0,360,0,0,0,2012-07-23 17:00,,,2012-07-23 16:59,2012-09-06 16:59,,2012-07-24 08:00,2012-09-06 17:00,2012-07-24 08:00,2012-09-06 17:00,2012-07-24 08:00,2012-09-06 17:00,,2012-07-23 16:59,2012-09-06 16:59,CS_MSO,PT_Normal,,,,,GjmGfbsGcEmOsYNWadXycA,vQ/i5SbETo6/zhp0lbrKxA,,,N,0,0,,,2012-06-20 11:04,2012-06-20 11:04,admin,admin,,,
459,83576,772,10553,794,1,0,N,N,N,CP_Drtn,TT_Task,DT_FixedDUR2,RV_OK,TK_NotStart,PRE102,Cathodic Protection,,-0.016667,1000,360,0,0,0,360,0,0,0,2012-05-23 17:00,,,2012-05-23 16:59,2012-07-07 16:59,,2012-05-24 08:00,2012-07-07 17:00,2012-05-24 08:00,2012-07-07 17:00,2012-05-24 08:00,2012-07-07 17:00,,2012-05-23 16:59,2012-07-07 16:59,CS_MSO,PT_Normal,,,,,D5Hw7eNoUEGEdN4DQLjGSQ,Iw4lArETRiW8xPu6VxnShg,,,N,0,0,,,2012-06-20 11:04,2012-06-20 11:04,admin,admin,,,
460,83577,772,10553,794,1,0,N,N,N,CP_Drtn,TT_Task,DT_FixedDUR2,RV_OK,TK_NotStart,PRE103,Solar Power,,-0.016667,912,360,0,0,0,360,0,0,0,2012-06-03 17:00,,,2012-06-03 16:59,2012-07-18 16:59,,2012-06-04 08:00,2012-07-18 17:00,2012-06-04 08:00,2012-07-18 17:00,2012-06-04 08:00,2012-07-18 17:00,,2012-06-03 16:59,2012-07-18 16:59,CS_MSO,PT_Normal,,,,,sET7YWFRGUuURcmv/i1Q4Q,VN0an5lGRoaFh0fMNvkkFA,,,N,0,0,,,2012-06-20 11:04,2012-06-20 11:04,admin,admin,,,
461,83578,772,10550,794,1,0,N,N,N,CP_Drtn,TT_Task,DT_FixedDUR2,RV_OK,TK_NotStart,PRE54,F&G Detector,,-0.016667,648,360,0,0,0,360,0,0,0,2012-07-06 17:00,,,2012-07-06 16:59,2012-08-20 16:59,,2012-07-07 08:00,2012-08-20 17:00,2012-07-07 08:00,2012-08-20 17:00,2012-07-07 08:00,2012-08-20 17:00,,2012-07-06 16:59,2012-08-20 16:59,CS_MSO,PT_Normal,,,,,xbGGt/Qin0maaSl29NTArA,VSwOK9yIRUSoxROQDvdw7g,,,N,0,0,,,2012-06-20 11:04,2012-06-20 11:04,admin,admin,,,
462,83579,772,10550,794,1,0,N,N,N,CP_Drtn,TT_Task,DT_FixedDUR2,RV_OK,TK_NotStart,PRE55,Fire fighting system,,-0.016667,720,360,0,0,0,360,0,0,0,2012-06-27 17:00,,,2012-06-27 16:59,2012-08-11 16:59,,2012-06-28 08:00,2012-08-11 17:00,2012-06-28 08:00,2012-08-11 17:00,2012-06-28 08:00,2012-08-11 17:00,,2012-06-27 16:59,2012-08-11 16:59,CS_MSO,PT_Normal,,,,,P5irn6AtgUKVahXzzWQ2hA,tpzm+A81SOKv9OzobhMGlw,,,N,0,0,,,2012-06-20 11:04,2012-06-20 11:04,admin,admin,,,
463,83580,772,10550,794,1,0,N,N,N,CP_Drtn,TT_Task,DT_FixedDUR2,RV_OK,TK_NotStart,PRE56,Life Saving Equipment,,-0.016667,664,360,0,0,0,360,0,0,0,2012-07-04 17:00,,,2012-07-04 16:59,2012-08-18 16:59,,2012-07-05 08:00,2012-08-18 17:00,2012-07-05 08:00,2012-08-18 17:00,2012-07-05 08:00,2012-08-18 17:00,,2012-07-04 16:59,2012-08-18 16:59,CS_MSO,PT_Normal,,,,,atyvQt7NDUqm+4FIS4e36g,KFlMp1iuR7Ggn/R36j8DNg,,,N,0,0,,,2012-06-20 11:04,2012-06-20 11:04,admin,admin,,,
464,83581,772,10551,794,1,0,N,N,N,CP_Drtn,TT_Task,DT_FixedDUR2,RV_OK,TK_NotStart,PRE59,Instrument Electical Bulk,,-0.016667,624,240,0,0,0,240,0,0,0,2012-07-24 17:00,,,2012-07-24 16:59,2012-08-23 16:59,,2012-07-25 08:00,2012-08-23 17:00,2012-07-25 08:00,2012-08-23 17:00,2012-07-25 08:00,2012-08-23 17:00,,2012-07-24 16:59,2012-08-23 16:59,CS_MSO,PT_Normal,,,,,3cmy1oDkTka8v3Az384k1Q,nbERwAGrT3emToa6M54rSw,,,N,0,0,,,2012-06-20 11:04,2012-06-20 11:04,admin,admin,,,
465,83582,772,10551,794,1,0,N,N,N,CP_Drtn,TT_Task,DT_FixedDUR2,RV_OK,TK_NotStart,PRE60,Instrument Mechanical Bulk,,-0.016667,640,280,0,0,0,280,0,0,0,2012-07-17 17:00,,,2012-07-17 16:59,2012-08-21 16:59,,2012-07-18 08:00,2012-08-21 17:00,2012-07-18 08:00,2012-08-21 17:00,2012-07-18 08:00,2012-08-21 17:00,,2012-07-17 16:59,2012-08-21 16:59,CS_MSO,PT_Normal,,,,,L3pX3skza0un3kwGG1fhuA,I5ckdTYuQTKukOCM1JedFw,,,N,0,0,,,2012-06-20 11:04,2012-06-20 11:04,admin,admin,,,
466,83583,772,10551,794,1,0,N,N,N,CP_Drtn,TT_Task,DT_FixedDUR2,RV_OK,TK_NotStart,PRE111,Field Instrument,,-0.016667,760,360,0,0,0,360,0,0,0,2012-06-22 17:00,,,2012-06-22 16:59,2012-08-06 16:59,,2012-06-23 08:00,2012-08-06 17:00,2012-06-23 08:00,2012-08-06 17:00,2012-06-23 08:00,2012-08-06 17:00,,2012-06-22 16:59,2012-08-06 16:59,CS_MSO,PT_Normal,,,,,XEp9Y6aqm0q2rELzaaHRNw,M/41QxsNRJS7+vZ1Rp7jJg,,,N,0,0,,,2012-06-20 11:04,2012-06-20 11:04,admin,admin,,,
467,83584,772,10551,794,1,0,N,N,N,CP_Drtn,TT_Task,DT_FixedDUR2,RV_OK,TK_NotStart,PRE112,multi phase flow meter,,-0.016667,1095,456,0,0,0,456,0,0,0,2012-07-17 17:00,,,2012-07-17 16:59,2012-09-12 16:59,,2012-07-18 08:00,2012-09-12 17:00,2012-07-18 08:00,2012-09-12 17:00,2012-07-18 08:00,2012-09-12 17:00,,2012-07-17 16:59,2012-09-12 16:59,CS_MSO,PT_Normal,,,,,1M8TOsKcY06+Mrpq/E5x2A,VbJvQNUwQvmr5G5TNU296w,,,N,0,0,,,2012-06-20 11:04,2012-06-20 11:04,admin,admin,,,
468,83585,772,10551,794,1,0,N,N,N,CP_Drtn,TT_Task,DT_FixedDUR2,RV_OK,TK_NotStart,PRE113,Safe Guard system,,-0.016667,1063,240,0,0,0,240,0,0,0,2012-08-17 17:00,,,2012-08-17 16:59,2012-09-16 16:59,,2012-08-18 08:00,2012-09-16 17:00,2012-08-18 08:00,2012-09-16 17:00,2012-08-18 08:00,2012-09-16 17:00,,2012-08-17 16:59,2012-09-16 16:59,CS_MSO,PT_Normal,,,,,yvDmlhgIWUirHLXez7CKSQ,jReSS16pSoan6pMZsdEk8g,,,N,0,0,,,2012-06-20 11:04,2012-06-20 11:04,admin,admin,,,
469,83586,772,10543,841,1,0,N,N,N,CP_Drtn,TT_Task,DT_FixedDUR2,RV_OK,TK_NotStart,JK51,"Jacket , Boat Landing Fabrication & Painting",,208,0,1400,0,0,0,1400,0,0,0,,,,2012-07-22 08:00,2013-02-24 16:00,,2012-06-21 08:00,2013-01-22 16:00,2012-06-21 08:00,2013-01-22 16:00,2012-06-21 08:00,2013-01-22 16:00,,2012-07-22 08:00,2013-02-24 16:00,,PT_Normal,,,,,f8dcLUDaW0mFAxOMouDUxQ,MJjexNjLRy6cxfkloFqepA,,,N,0,0,,,2012-06-20 11:04,2012-06-20 11:04,admin,admin,,,
470,83587,772,10543,841,1,0,N,N,N,CP_Drtn,TT_Task,DT_FixedDUR2,RV_OK,TK_NotStart,JK52,Piles Fabrication & Marking,,592,592,1000,0,0,0,1000,0,0,0,,,,2012-11-08 08:00,2013-04-07 16:00,,2012-08-06 08:00,2013-01-08 16:00,2012-08-06 08:00,2013-01-08 16:00,2012-08-06 08:00,2013-01-08 16:00,,2012-11-08 08:00,2013-04-07 16:00,,PT_Normal,,,,,/vUBPL+hDE+AraLsAZ93Rw,cmwt03k5QUWVZ2X2eta6kg,,,N,0,0,,,2012-06-20 11:04,2012-06-20 11:04,admin,admin,,,
471,83588,772,10554,841,1,0,N,N,N,CP_Drtn,TT_Task,DT_FixedDUR2,RV_OK,TK_NotStart,DS061,Fabrication and Painting of Below Production Deck/Legs,,0,0,840,0,0,0,840,0,0,0,,,,2012-06-13 08:00,2012-10-18 16:00,,2012-06-13 08:00,2012-10-18 16:00,2012-06-13 08:00,2012-10-18 16:00,2012-06-13 08:00,2012-10-18 16:00,,2012-06-13 08:00,2012-10-18 16:00,,PT_Normal,,,,,yJOcZnm0q0CRbfVP28edxg,YDhnGt4WSampcAcCK/B2gQ,,,Y,0,0,,,2012-06-20 11:04,2012-06-20 11:04,admin,admin,,,
472,83589,772,10554,841,1,0,N,N,N,CP_Drtn,TT_Task,DT_FixedDUR2,RV_OK,TK_NotStart,DS062,Fabrication and Painting of Production Deck,,0,0,960,0,0,0,960,0,0,0,,,,2012-06-13 08:00,2012-11-08 16:00,,2012-06-13 08:00,2012-11-08 16:00,2012-06-13 08:00,2012-11-08 16:00,2012-06-13 08:00,2012-11-08 16:00,,2012-06-13 08:00,2012-11-08 16:00,,PT_Normal,,,,,01tx/mhzDEqK5hEySSnx8Q,xFi93CoKSi++4GmIMxpP9w,,,Y,0,0,,,2012-06-20 11:04,2012-06-20 11:04,admin,admin,,,
473,83590,772,10554,841,1,0,N,N,N,CP_Drtn,TT_Task,DT_FixedDUR2,RV_OK,TK_NotStart,DS063,Fabrication and Paint of Heli-Deck ( & Lifting if Required),,400,0,960,0,0,0,960,0,0,0,,,,2012-10-29 08:00,2013-03-21 16:00,,2012-08-27 08:00,2013-01-20 16:00,2012-08-27 08:00,2013-01-20 16:00,2012-08-27 08:00,2013-01-20 16:00,,2012-10-29 08:00,2013-03-21 16:00,,PT_Normal,,,,,YUyROXAUqkawcIUTUh/6Zg,rvAg4dTFTzOC9LQPbMvlVA,,,N,0,0,,,2012-06-20 11:04,2012-06-20 11:04,admin,admin,,,
474,83591,772,10554,841,1,0,N,N,N,CP_Drtn,TT_Task,DT_FixedDUR2,RV_OK,TK_NotStart,DS064,Lifting Below Production Deck on High Cups,,24,0,40,0,0,0,40,0,0,0,,,,2012-10-23 08:00,2012-10-31 16:00,,2012-10-20 08:00,2012-10-24 16:00,2012-10-20 08:00,2012-10-24 16:00,2012-10-20 08:00,2012-10-24 16:00,,2012-10-23 08:00,2012-10-31 16:00,,PT_Normal,,,,,Re19JDReMU2MIdJzxMiQ6A,bQ+CxC0TQriVcwNqie/vXQ,,,N,0,0,,,2012-06-20 11:04,2012-06-20 11:04,admin,admin,,,
475,83592,772,10554,841,1,0,N,N,N,CP_Drtn,TT_Task,DT_FixedDUR2,RV_OK,TK_NotStart,DS065,Lifting Production Deck on Below Production Level,,0,0,120,0,0,0,120,0,0,0,,,,2012-11-10 08:00,2012-11-27 16:00,,2012-11-10 08:00,2012-11-27 16:00,2012-11-10 08:00,2012-11-27 16:00,2012-11-10 08:00,2012-11-27 16:00,,2012-11-10 08:00,2012-11-27 16:00,,PT_Normal,,,,,hV8iwKgYR02Ozx1BEZpVzA,kvv6UChdRT2TML26fqP2Og,,,Y,0,0,,,2012-06-20 11:04,2012-06-20 11:04,admin,admin,,,
476,83593,772,10554,841,1,0,N,N,N,CP_Drtn,TT_Task,DT_FixedDUR2,RV_OK,TK_NotStart,DS066,Fabrication & Installation of Deck Str. Miscellence / Padeyes,,80,24,960,0,0,0,960,0,0,0,,,,2012-10-17 08:00,2013-03-13 16:00,,2012-10-04 08:00,2013-03-02 16:00,2012-10-04 08:00,2013-03-02 16:00,2012-10-04 08:00,2013-03-02 16:00,,2012-10-17 08:00,2013-03-13 16:00,,PT_Normal,,,,,Z38QcnozS0WIiQ/Rzv/KRQ,CWEx43mfRrCS6ZOEt8Q5OA,,,N,0,0,,,2012-06-20 11:04,2012-06-20 11:04,admin,admin,,,
477,83594,772,10554,841,0,0,N,N,N,CP_Drtn,TT_FinMile,DT_FixedDrtn,RV_OK,TK_NotStart,DS067,Physical Weighting,,80,0,0,0,0,0,0,0,0,0,,,,2013-03-06 16:00,2013-03-06 16:00,,2013-02-23 16:00,2013-02-23 16:00,2013-02-23 16:00,2013-02-23 16:00,2013-02-23 16:00,2013-02-23 16:00,,2013-03-06 16:00,2013-03-06 16:00,,PT_Normal,,,,,CXOsscT5BEubEM5ckWwr7Q,dU19c7ngSBGK2PpNjJWMWA,,,N,0,0,,,2012-06-20 11:04,2012-06-20 11:04,admin,admin,,,
478,83595,772,10554,841,1,0,N,N,N,CP_Drtn,TT_Task,DT_FixedDUR2,RV_OK,TK_NotStart,DS058,Clearanse of structure (Fab. & Painting ) Punch List,,56,56,168,0,0,0,168,0,0,0,,,,2013-03-14 08:00,2013-04-07 16:00,,2013-03-06 08:00,2013-03-30 16:00,2013-03-06 08:00,2013-03-30 16:00,2013-03-06 08:00,2013-03-30 16:00,,2013-03-14 08:00,2013-04-07 16:00,,PT_Normal,,,,,Nr1cc06KmECujVtqw9c4Jg,2xbSngZtS1yuYdYRZesY/A,,,N,0,0,,,2012-06-20 11:04,2012-06-20 11:04,admin,admin,,,
479,83596,772,10556,841,1,0,N,N,N,CP_Drtn,TT_Task,DT_FixedDUR2,RV_OK,TK_NotStart,TFS051,Piping and Piping Supports Fabrication and Painting,,320,320,800,0,0,0,800,0,0,0,,,,2012-09-10 08:00,2013-01-10 16:00,,2012-07-21 08:00,2012-11-24 16:00,2012-07-21 08:00,2012-11-24 16:00,2012-07-21 08:00,2012-11-24 16:00,,2012-09-10 08:00,2013-01-10 16:00,,PT_Normal,,,,,r8eVsEdCzEmzkeEIBrDIJg,MmyOxGLAQBKzrY9ic24SKw,,,N,0,0,,,2012-06-20 11:04,2012-06-20 11:04,admin,admin,,,
480,83597,772,10556,841,1,0,N,N,N,CP_Drtn,TT_Task,DT_FixedDUR2,RV_OK,TK_NotStart,TSF052,Piping and Piping Supports Erection,,0,0,600,0,0,0,600,0,0,0,,,,2012-11-25 08:00,2013-02-23 16:00,,2012-11-25 08:00,2013-02-23 16:00,2012-11-25 08:00,2013-02-23 16:00,2012-11-25 08:00,2013-02-23 16:00,,2012-11-25 08:00,2013-02-23 16:00,,PT_Normal,,,,,9ftbBI9iM0eaBvD9a/4+Ug,sdcBHYglTkmbL+zUfSnz1Q,,,Y,0,0,,,2012-06-20 11:04,2012-06-20 11:04,admin,admin,,,
481,83598,772,10557,841,1,0,N,N,N,CP_Drtn,TT_Task,DT_FixedDUR2,RV_OK,TK_NotStart,TSF063,Equipment Erection on Below Production Level,,24,24,56,0,0,0,56,0,0,0,,,,2012-11-01 08:00,2012-11-08 16:00,,2012-10-29 08:00,2012-11-05 16:00,2012-10-29 08:00,2012-11-05 16:00,2012-10-29 08:00,2012-11-05 16:00,,2012-11-01 08:00,2012-11-08 16:00,,PT_Normal,,,,,s0DyobmjTkeUu3+oTULFag,z1CTK+RVT2ODKyZP+ZU/NQ,,,N,0,0,,,2012-06-20 11:04,2012-06-20 11:04,admin,admin,,,
482,83599,772,10557,841,1,0,N,N,N,CP_Drtn,TT_Task,DT_FixedDUR2,RV_OK,TK_NotStart,TSF064,Equipment Erection on Production Level,,216,216,120,0,0,0,120,0,0,0,,,,2012-12-30 08:00,2013-01-16 16:00,,2012-11-28 08:00,2012-12-15 16:00,2012-11-28 08:00,2012-12-15 16:00,2012-11-28 08:00,2012-12-15 16:00,,2012-12-30 08:00,2013-01-16 16:00,,PT_Normal,,,,,sqc06oL5q0+4XGU7JPqdPw,uRd8e2PwTCikyeTQ2cwlXg,,,N,0,0,,,2012-06-20 11:04,2012-06-20 11:04,admin,admin,,,
483,83600,772,10557,841,1,0,N,N,N,CP_Drtn,TT_Task,DT_FixedDUR2,RV_OK,TK_NotStart,TSF065,Equipment Erection on Helideck,,400,400,56,0,0,0,56,0,0,0,,,,2013-02-16 08:00,2013-02-23 16:00,,2012-12-16 08:00,2012-12-23 16:00,2012-12-16 08:00,2012-12-23 16:00,2012-12-16 08:00,2012-12-23 16:00,,2013-02-16 08:00,2013-02-23 16:00,,PT_Normal,,,,,pawgTTY21E6tkH79yskWJg,aPJaRDLhRCS2fQT2L4W4XQ,,,N,0,0,,,2012-06-20 11:04,2012-06-20 11:04,admin,admin,,,
484,83601,772,10558,841,1,0,N,N,N,CP_Drtn,TT_Task,DT_FixedDUR2,RV_OK,TK_NotStart,TS57,E&I Activity,,16,16,720,0,0,0,720,0,0,0,,,,2012-11-12 08:00,2013-02-28 16:00,,2012-11-10 08:00,2013-02-26 16:00,2012-11-10 08:00,2013-02-26 16:00,2012-11-10 08:00,2013-02-26 16:00,,2012-11-12 08:00,2013-02-28 16:00,,PT_Normal,,,,,2viDyXa3YkS8/ZGkAbUtFg,wsdfJJRZTh6vVDGXiSaIkQ,,,N,0,0,,,2012-06-20 11:04,2012-06-20 11:04,admin,admin,,,
485,83602,772,10559,841,1,0,N,N,N,CP_Drtn,TT_Task,DT_FixedDUR2,RV_OK,TK_NotStart,TS58,"Pre-commissioning """" Piping Hydrotest , Reinstatment , Megering , Continuity Test and Touch Up """"",,0,0,280,0,0,0,280,0,0,0,,,,2013-02-18 08:00,2013-03-30 16:00,,2013-02-18 08:00,2013-03-30 16:00,2013-02-18 08:00,2013-03-30 16:00,2013-02-18 08:00,2013-03-30 16:00,,2013-02-18 08:00,2013-03-30 16:00,,PT_Normal,,,,,I1I0Ha2sW0urATfG/kFTHg,lPjrgJbBSWyVdJYtkd0lWQ,,,Y,0,0,,,2012-06-20 11:04,2012-06-20 11:04,admin,admin,,,
486,83603,772,10546,841,1,0,N,N,N,CP_Drtn,TT_Task,DT_FixedDUR2,RV_OK,TK_NotStart,PL51,P/L Spools Fabrication,,832,0,720,0,0,0,720,0,0,0,,,,2012-11-07 08:00,2013-02-24 16:00,,2012-06-30 08:00,2012-10-17 16:00,2012-06-30 08:00,2012-10-17 16:00,2012-06-30 08:00,2012-10-17 16:00,,2012-11-07 08:00,2013-02-24 16:00,,PT_Normal,,,,,qTXx2UTpxkelT/xcjpoY9Q,HLJPh8QQQuqRB3kePFiOKw,,,N,0,0,,,2012-06-20 11:04,2012-06-20 11:04,admin,admin,,,
487,83604,772,10547,841,0,0,N,N,N,CP_Drtn,TT_Mile,DT_FixedDrtn,RV_OK,TK_NotStart,LOPS51,Arrival of 01st Shipment Material Barge ( P/L Spools),,0,128,0,0,0,0,0,0,0,0,2012-09-15 08:00,,,2012-09-15 08:00,2012-09-15 08:00,,2012-09-15 08:00,2012-09-15 08:00,2012-09-15 08:00,2012-09-15 08:00,2012-09-15 08:00,2012-09-15 08:00,,2012-09-15 08:00,2012-09-15 08:00,CS_MSO,PT_Normal,,,,,gLdA331eykCUYpSAEI7MDA,B4Hx/kkxQZKPJEG8DiZMqQ,,,N,0,0,,,2012-06-20 11:04,2012-06-20 11:04,admin,admin,,,
488,83605,772,10547,841,1,0,N,N,N,CP_Drtn,TT_Task,DT_FixedDUR2,RV_OK,TK_NotStart,LOPS52,1st Shipment Material Barge Preparation,,1088,0,96,0,0,0,96,0,0,0,,,,2013-03-20 08:00,2013-04-02 16:00,,2012-10-03 08:00,2012-10-17 16:00,2012-10-03 08:00,2012-10-17 16:00,2012-10-03 08:00,2012-10-17 16:00,,2013-03-20 08:00,2013-04-02 16:00,,PT_Normal,,,,,QQ3O1VF/PUuI8kIhAjYlrw,ffJmeitJThGKpY3WVSZDNQ,,,N,0,0,,,2012-06-20 11:04,2012-06-20 11:04,admin,admin,,,
489,83606,772,10547,841,1,0,N,N,N,CP_Drtn,TT_Task,DT_FixedDUR2,RV_OK,TK_NotStart,LOPS53,"L/O & Sea Fastening (P/L Spools 18"""" & 8"""")",,1088,0,32,0,0,0,32,0,0,0,,,,2013-04-03 08:00,2013-04-07 16:00,,2012-10-18 08:00,2012-10-22 16:00,2012-10-18 08:00,2012-10-22 16:00,2012-10-18 08:00,2012-10-22 16:00,,2013-04-03 08:00,2013-04-07 16:00,,PT_Normal,,,,,x6V54hxhqUKk6PV2yrGtHQ,0IwOiWOuTGWgp9eZJV76QQ,,,N,0,0,,,2012-06-20 11:04,2012-06-20 11:04,admin,admin,,,
490,83607,772,10548,841,0,0,N,N,N,CP_Drtn,TT_Mile,DT_FixedDrtn,RV_OK,TK_NotStart,LOJK51,Arrival of 02nd Shipment Material Barge ( Jacket and Piles ),,0,263.983333,0,0,0,0,0,0,0,0,2012-12-01 08:01,,,2012-12-01 08:01,2012-12-01 08:01,,2012-12-01 08:01,2012-12-01 08:01,2012-12-01 08:01,2012-12-01 08:01,2012-12-01 08:01,2012-12-01 08:01,,2012-12-01 08:01,2012-12-01 08:01,CS_MSO,PT_Normal,,,,,Z6DszbWmBEuIzZY3ZXODnA,TZSnzFwbTP2WYUW5WMHAXA,,,N,0,0,,,2012-06-20 11:04,2012-06-20 11:04,admin,admin,,,
491,83608,772,10548,841,1,0,N,N,N,CP_Drtn,TT_Task,DT_FixedDUR2,RV_OK,TK_NotStart,LOJK52,02nd Shipment Material Barge Preparation,,208,0,96,0,0,0,96,0,0,0,,,,2013-02-11 08:00,2013-02-24 16:00,,2013-01-09 08:00,2013-01-22 16:00,2013-01-09 08:00,2013-01-22 16:00,2013-01-09 08:00,2013-01-22 16:00,,2013-02-11 08:00,2013-02-24 16:00,,PT_Normal,,,,,p5Q3P41hK0+G5jIE1hj0/Q,XbtAi6jCTDyBXVHSpw5OSQ,,,N,0,0,,,2012-06-20 11:04,2012-06-20 11:04,admin,admin,,,
492,83609,772,10548,841,1,0,N,N,N,CP_Drtn,TT_Task,DT_FixedDUR2,RV_OK,TK_NotStart,LOJK53,L/O & Sea fastening ( Jacket & Piles ),,208,0,56,0,0,0,56,0,0,0,,,,2013-02-25 08:00,2013-03-04 16:00,,2013-01-23 08:00,2013-01-31 16:00,2013-01-23 08:00,2013-01-31 16:00,2013-01-23 08:00,2013-01-31 16:00,,2013-02-25 08:00,2013-03-04 16:00,,PT_Normal,,,,,TkSMoeJHo0uvQRoIiIk2NQ,0h5qrf7kSZW3DGU5wFjrDw,,,N,0,0,,,2012-06-20 11:04,2012-06-20 11:04,admin,admin,,,
493,83610,772,10545,841,0,0,N,N,N,CP_Drtn,TT_Mile,DT_FixedDrtn,RV_OK,TK_NotStart,LODK51,Arrival of 03rd Shipment Material Barge ( Deck C/W TSF ),,-0.016667,104,0,0,0,0,0,0,0,0,2013-03-01 08:01,,,2013-02-28 15:59,2013-02-28 15:59,,2013-03-02 08:00,2013-03-02 08:00,2013-03-02 08:00,2013-03-02 08:00,2013-03-02 08:00,2013-03-02 08:00,,2013-02-28 15:59,2013-02-28 15:59,CS_MSO,PT_Normal,,,,,0rmY69YXCUy7KfrQhzuZIQ,ExIEDAbgRLSmFck0X+OxYg,,,N,0,0,,,2012-06-20 11:04,2012-06-20 11:04,admin,admin,,,
494,83611,772,10545,841,1,0,N,N,N,CP_Drtn,TT_Task,DT_FixedDUR2,RV_OK,TK_NotStart,LODK52,3rd Shipment Material Barge Preparation,,0,0,96,0,0,0,96,0,0,0,,,,2013-03-17 08:00,2013-03-30 16:00,,2013-03-17 08:00,2013-03-30 16:00,2013-03-17 08:00,2013-03-30 16:00,2013-03-17 08:00,2013-03-30 16:00,,2013-03-17 08:00,2013-03-30 16:00,,PT_Normal,,,,,xXqqj2luikiePOaOzFdLxA,lPDdUYuUTIydlmlcan93BQ,,,Y,0,0,,,2012-06-20 11:04,2012-06-20 11:04,admin,admin,,,
495,83612,772,10545,841,1,0,N,N,N,CP_Drtn,TT_Task,DT_FixedDUR2,RV_OK,TK_NotStart,LODK53,L/O & Sea fastening ( Deck),,0,0,56,0,0,0,56,0,0,0,,,,2013-03-31 08:00,2013-04-07 16:00,,2013-03-31 08:00,2013-04-07 16:00,2013-03-31 08:00,2013-04-07 16:00,2013-03-31 08:00,2013-04-07 16:00,,2013-03-31 08:00,2013-04-07 16:00,,PT_Normal,,,,,FfBrtoWONEmAZail6DLhtQ,a29m8wZtSbmmAh/FPoIQAw,,,Y,0,0,,,2012-06-20 11:04,2012-06-20 11:04,admin,admin,,,
496,83613,772,10542,794,1,0,N,N,N,CP_Drtn,TT_Task,DT_FixedDrtn,RV_OK,TK_NotStart,PRP112,"Pipeline 8"""" & Fittings",,-0.016667,2087,408,0,0,0,408,0,0,0,2012-05-30 17:00,,,2012-05-30 16:59,2012-07-20 16:59,,2012-05-31 08:00,2012-07-20 17:00,2012-05-31 08:00,2012-07-20 17:00,2012-05-31 08:00,2012-07-20 17:00,,2012-05-30 16:59,2012-07-20 16:59,CS_MSO,PT_Normal,,,,,yu6FsQ/3g0+C8du80cnVHQ,tjm2mx2cUUyxd/Z8deMfQA,,,N,0,0,,,2012-06-20 11:04,2012-06-20 11:04,admin,admin,,,
497,83614,772,10530,841,0,0,N,N,N,CP_Drtn,TT_FinMile,DT_FixedDrtn,RV_OK,TK_NotStart,GM61,Reciving Fax of Award,,-0.016667,0,0,0,0,0,0,0,0,0,2012-01-20 16:00,,,2012-01-19 16:00,2012-01-19 16:00,,2012-01-21 08:01,2012-01-21 08:01,2012-01-21 08:01,2012-01-21 08:01,2012-01-21 08:01,2012-01-21 08:01,,2012-01-19 16:00,2012-01-19 16:00,CS_MEO,PT_Normal,,,,,gDyIyrYNwUGD5rYOEro6IA,mAYBql7WQzuUeAh5RGjavw,,,N,0,0,,,2012-06-20 11:04,2012-06-20 11:04,admin,admin,,,
498,83615,772,10530,841,0,0,N,N,N,CP_Drtn,TT_Mile,DT_FixedDrtn,RV_OK,TK_NotStart,GM62,Project Fab. Start,,1951.983333,1952,0,0,0,0,0,0,0,0,,,,2013-04-07 15:59,2013-04-07 15:59,,2012-06-13 08:00,2012-06-13 08:00,2012-06-13 08:00,2012-06-13 08:00,2012-06-13 08:00,2012-06-13 08:00,,2013-04-07 15:59,2013-04-07 15:59,,PT_Normal,,,,,cALz3b5YOkCOqRZTSi4tTQ,MUGR7HsxSCatq1Lsy+yI2A,,,N,0,0,,,2012-06-20 11:04,2012-06-20 11:04,admin,admin,,,
499,83616,772,10530,841,0,0,N,N,N,CP_Drtn,TT_Mile,DT_FixedDrtn,RV_OK,TK_NotStart,GM64,Ready for Load out ( 02nd Shipment/ Jacket & Piles ),,208,208,0,0,0,0,0,0,0,0,,,,2013-02-25 08:00,2013-02-25 08:00,,2013-01-23 08:00,2013-01-23 08:00,2013-01-23 08:00,2013-01-23 08:00,2013-01-23 08:00,2013-01-23 08:00,,2013-02-25 08:00,2013-02-25 08:00,,PT_Normal,,,,,eLPH5jNdekSXHx10nbDXoQ,oEdGu9OnQ0CgAkVlSv8iuw,,,N,0,0,,,2012-06-20 11:04,2012-06-20 11:04,admin,admin,,,
500,83617,772,10530,841,0,0,N,N,N,CP_Drtn,TT_Mile,DT_FixedDrtn,RV_OK,TK_NotStart,GM65,Ready for Load out ( 03rd Shipment/ Deck C/W TSF ),,55.983333,56,0,0,0,0,0,0,0,0,,,,2013-04-07 15:59,2013-04-07 15:59,,2013-03-31 08:00,2013-03-31 08:00,2013-03-31 08:00,2013-03-31 08:00,2013-03-31 08:00,2013-03-31 08:00,,2013-04-07 15:59,2013-04-07 15:59,,PT_Normal,,,,,SGXArUwQuEaIc5jb/uP+BA,h7hpizZeQXG79P6YGic48A,,,N,0,0,,,2012-06-20 11:04,2012-06-20 11:04,admin,admin,,,
501,83618,772,10530,841,0,0,N,N,N,CP_Drtn,TT_Mile,DT_FixedDrtn,RV_OK,TK_NotStart,GM63,"Ready for Load out (01st Shipment / Pipeline Spools 18"""" & 8"""")",,1119.983333,1120,0,0,0,0,0,0,0,0,,,,2013-04-07 15:59,2013-04-07 15:59,,2012-10-18 08:00,2012-10-18 08:00,2012-10-18 08:00,2012-10-18 08:00,2012-10-18 08:00,2012-10-18 08:00,,2013-04-07 15:59,2013-04-07 15:59,,PT_Normal,,,,,GajXu4oH5kOpue28QvPnig,hwMqvqcnTaWjHD3UCB8GZQ,,,N,0,0,,,2012-06-20 11:04,2012-06-20 11:04,admin,admin,,,
502,83619,772,10536,794,1,0,N,N,N,CP_Drtn,TT_Task,DT_FixedDrtn,RV_OK,TK_NotStart,ENS63,Receiving Jacket Primary & Secondary Steel IFC DWG`s,,0,0,1104,0,0,0,1104,0,0,0,2011-11-30 08:01,,,2011-11-30 08:01,2012-04-16 08:01,,2011-11-30 08:01,2012-04-16 08:01,2011-11-30 08:01,2012-04-16 08:01,2011-11-30 08:01,2012-04-16 08:01,,2011-11-30 08:01,2012-04-16 08:01,CS_MSO,PT_Normal,,,,,kmu4Dj/nnkOp+EK3jClcXQ,/taVGz7GStKxIdbmdm3JkA,,,N,0,0,,,2012-06-20 11:04,2012-06-20 11:04,admin,admin,,,
503,83620,772,10536,794,0,0,N,N,N,CP_Drtn,TT_FinMile,DT_FixedDrtn,RV_OK,TK_NotStart,ENS64,Receiving Piles IFC DWG`s,,0,720,0,0,0,0,0,0,0,0,2012-01-17 08:01,,,2012-01-17 08:01,2012-01-17 08:01,,2012-01-17 08:01,2012-01-17 08:01,2012-01-17 08:01,2012-01-17 08:01,2012-01-17 08:01,2012-01-17 08:01,,2012-01-17 08:01,2012-01-17 08:01,CS_MEO,PT_Normal,,,,,0jfZvq+rckCZhd/Gs8Ntsw,Na3Aup6tShC+yRgy8OADFw,,,N,0,0,,,2012-06-20 11:04,2012-06-20 11:04,admin,admin,,,
504,83621,772,10536,794,1,0,N,N,N,CP_Drtn,TT_Task,DT_FixedDUR2,RV_OK,TK_NotStart,ENS65,Receiving Deck Str. Primary & Secondary IFC DWG`s,,0,224,328,0,0,0,328,0,0,0,2012-02-07 08:01,,,2012-02-07 08:01,2012-03-19 08:01,,2012-02-07 08:01,2012-03-19 08:01,2012-02-07 08:01,2012-03-19 08:01,2012-02-07 08:01,2012-03-19 08:01,,2012-02-07 08:01,2012-03-19 08:01,CS_MSO,PT_Normal,,,,,LN+jeXOOhUWg2ecq3hbUQQ,fi7weAl5SEGTR2lLUeKx/w,,,N,0,0,,,2012-06-20 11:04,2012-06-20 11:04,admin,admin,,,
505,83622,772,10536,794,0,0,N,N,N,CP_Drtn,TT_FinMile,DT_FixedDrtn,RV_OK,TK_NotStart,ENS61,"Receiving Final Jacket , Boat Land & Piles MTO",,135.983333,135.983333,0,0,0,0,0,0,0,0,,,,2012-02-14 17:00,2012-02-14 17:00,,2012-01-29 08:01,2012-01-29 08:01,2012-01-29 08:01,2012-01-29 08:01,2012-01-29 08:01,2012-01-29 08:01,,2012-02-14 17:00,2012-02-14 17:00,,PT_Normal,,,,,nvgkGEDoTkqOr1PmQ4/pWA,TPEjRmwKRrq6hsy6oKat/g,,,N,0,0,,,2012-06-20 11:04,2012-06-20 11:04,admin,admin,,,
506,83623,772,10536,794,0,0,N,N,N,CP_Drtn,TT_FinMile,DT_FixedDrtn,RV_OK,TK_NotStart,ENS62,Receiving Final Deck Str. MTO,,135.983333,135.983333,0,0,0,0,0,0,0,0,,,,2012-02-14 17:00,2012-02-14 17:00,,2012-01-29 08:01,2012-01-29 08:01,2012-01-29 08:01,2012-01-29 08:01,2012-01-29 08:01,2012-01-29 08:01,,2012-02-14 17:00,2012-02-14 17:00,,PT_Normal,,,,,GQ5EExp4bk+njiWKbH6XZQ,6nkSfB2oQqWjhNUPP6KgpA,,,N,0,0,,,2012-06-20 11:04,2012-06-20 11:04,admin,admin,,,
507,83624,772,10536,794,1,0,N,N,N,CP_Drtn,TT_Task,DT_FixedDrtn,RV_OK,TK_NotStart,ENS68,Receiving IFC Equipment fixation DWG`s,,0,1559.983333,104,0,0,0,104,0,0,0,2012-04-04 08:01,,,2012-04-04 08:01,2012-04-17 08:01,,2012-04-04 08:01,2012-04-17 08:01,2012-04-04 08:01,2012-04-17 08:01,2012-04-04 08:01,2012-04-17 08:01,,2012-04-04 08:01,2012-04-17 08:01,CS_MSO,PT_Normal,,,,,fsuSzk1BTUODC15abNLXEw,mm1mBipHSJKSJiX6ECgsuA,,,N,0,0,,,2012-06-20 11:04,2012-06-20 11:04,admin,admin,,,
508,83625,772,10536,794,1,0,N,N,N,CP_Drtn,TT_Task,DT_FixedDUR2,RV_OK,TK_NotStart,ENS66,Receiving Piping Supports IFC DWG's,,0,3078.983333,160,0,0,0,160,0,0,0,2012-02-28 08:01,,,2012-02-28 08:01,2012-03-19 08:01,,2012-02-28 08:01,2012-03-19 08:01,2012-02-28 08:01,2012-03-19 08:01,2012-02-28 08:01,2012-03-19 08:01,,2012-02-28 08:01,2012-03-19 08:01,CS_MSO,PT_Normal,,,,,L1M2oyzaJkWblybCa6D7Wg,00Owhd0XR8uvJLKhPzMELA,,,N,0,0,,,2012-06-20 11:04,2012-06-20 11:04,admin,admin,,,
509,83626,772,10536,794,1,0,N,N,N,CP_Drtn,TT_Task,DT_FixedDUR2,RV_OK,TK_NotStart,ENS67,Receiving Cable tarys Support IFC DWG's,,0,3022.983333,104,0,0,0,104,0,0,0,2012-03-13 08:01,,,2012-03-13 08:01,2012-03-26 08:01,,2012-03-13 08:01,2012-03-26 08:01,2012-03-13 08:01,2012-03-26 08:01,2012-03-13 08:01,2012-03-26 08:01,,2012-03-13 08:01,2012-03-26 08:01,CS_MSO,PT_Normal,,,,,4znB9YfKfE+98jRWzfU5/g,JPgGdggzREiAYSQ7vnqU2w,,,N,0,0,,,2012-06-20 11:04,2012-06-20 11:04,admin,admin,,,
510,83627,772,10536,794,1,0,N,N,N,CP_Drtn,TT_Task,DT_FixedDrtn,RV_OK,TK_NotStart,ENS69,"Receiving P/L 8"""" & 18"""" IFC DWG's",,0,2736,160,0,0,0,160,0,0,0,2012-04-10 16:00,,,2012-04-10 16:00,2012-04-30 16:00,,2012-04-10 16:00,2012-04-30 16:00,2012-04-10 16:00,2012-04-30 16:00,2012-04-10 16:00,2012-04-30 16:00,,2012-04-10 16:00,2012-04-30 16:00,CS_MSO,PT_Normal,,,,,xAc4V2j5HEi20Du9ey9+5A,98Xxuu9fQZixtpBjPwMmlQ,,,N,0,0,,,2012-06-20 11:04,2012-06-20 11:04,admin,admin,,,
511,83628,772,10537,794,1,0,N,N,N,CP_Drtn,TT_Task,DT_FixedDrtn,RV_OK,TK_NotStart,ENT63,Receiving Piping ISO`s IFC DWG's,,0,1047.983333,112,0,0,0,112,0,0,0,2012-02-27 08:01,,,2012-02-27 08:01,2012-03-12 08:01,,2012-02-27 08:01,2012-03-12 08:01,2012-02-27 08:01,2012-03-12 08:01,2012-02-27 08:01,2012-03-12 08:01,,2012-02-27 08:01,2012-03-12 08:01,CS_MSO,PT_Normal,,,,,Xn1fOS8owU6OCKnkj+mztw,enOOp99+SsqEvqB5hnSgoA,,,N,0,0,,,2012-06-20 11:04,2012-06-20 11:04,admin,admin,,,
512,83629,772,10537,794,0,0,N,N,N,CP_Drtn,TT_FinMile,DT_FixedDrtn,RV_OK,TK_NotStart,ENT61,Issue Approved P&ID's / Equipment List IFC DWG's,,0,3584,0,0,0,0,0,0,0,0,2012-01-15 16:00,,,2012-01-15 16:00,2012-01-15 16:00,,2012-01-15 16:00,2012-01-15 16:00,2012-01-15 16:00,2012-01-15 16:00,2012-01-15 16:00,2012-01-15 16:00,,2012-01-15 16:00,2012-01-15 16:00,CS_MEO,PT_Normal,,,,,SXz0RhSDlEiPOJq3jHZxgQ,93sGNlW6QoCv/1ksHG2NzA,,,N,0,0,,,2012-06-20 11:04,2012-06-20 11:04,admin,admin,,,
513,83630,772,10537,794,0,0,N,N,N,CP_Drtn,TT_FinMile,DT_FixedDrtn,RV_OK,TK_NotStart,ENT62,Issue plat plans IFC DWG's,,0,3408,0,0,0,0,0,0,0,0,2012-02-06 16:00,,,2012-02-06 16:00,2012-02-06 16:00,,2012-02-06 16:00,2012-02-06 16:00,2012-02-06 16:00,2012-02-06 16:00,2012-02-06 16:00,2012-02-06 16:00,,2012-02-06 16:00,2012-02-06 16:00,CS_MEO,PT_Normal,,,,,zD11KSYiw0KR6IKCV7TAJA,FmX28kBFQpGSXexVmL7Wlw,,,N,0,0,,,2012-06-20 11:04,2012-06-20 11:04,admin,admin,,,
514,83631,772,10537,841,0,0,N,N,N,CP_Drtn,TT_FinMile,DT_FixedDrtn,RV_OK,TK_NotStart,ENT64,Issue Hydrotest maps & loops IFC DWG's,,0,2648,0,0,0,0,0,0,0,0,2012-02-28 16:00,,,2012-02-28 16:00,2012-02-28 16:00,,2012-02-28 16:00,2012-02-28 16:00,2012-02-28 16:00,2012-02-28 16:00,2012-02-28 16:00,2012-02-28 16:00,,2012-02-28 16:00,2012-02-28 16:00,CS_MEO,PT_Normal,,,,,oih/hFCU5EyXELRR6hmi/Q,5DGNq1VSTqKaHuj3eSEIjw,,,N,0,0,,,2012-06-20 11:04,2012-06-20 11:04,admin,admin,,,
515,83632,772,10538,794,1,0,N,N,N,CP_Drtn,TT_Task,DT_FixedDUR2,RV_OK,TK_NotStart,ENE61,Receiving E&I IFC DWG`s,,0,2279.983333,776,0,0,0,776,0,0,0,2012-01-23 08:01,,,2012-01-23 08:01,2012-04-29 08:01,,2012-01-23 08:01,2012-04-29 08:01,2012-01-23 08:01,2012-04-29 08:01,2012-01-23 08:01,2012-04-29 08:01,,2012-01-23 08:01,2012-04-29 08:01,CS_MSO,PT_Normal,,,,,Zc1ZRSL1NUyssiNgFYBg5A,3Z6l8wXrS6642p/eM8yB1A,,,N,0,0,,,2012-06-20 11:04,2012-06-20 11:04,admin,admin,,,
516,83633,772,10532,841,1,0,N,N,N,CP_Drtn,TT_Task,DT_FixedDUR2,RV_OK,TK_NotStart,PF61,Pre-Fabrication of Steel Structure ( Jacket & Piles),,208,0,960,0,0,0,960,0,0,0,,,,2012-07-14 08:00,2012-12-10 16:00,,2012-06-13 08:00,2012-11-08 16:00,2012-06-13 08:00,2012-11-08 16:00,2012-06-13 08:00,2012-11-08 16:00,,2012-07-14 08:00,2012-12-10 16:00,,PT_Normal,,,,,U6HCLR09lES81BMx5aMS4g,BUUxQXUKQcKvFYRqrGtbRg,,,N,0,0,,,2012-06-20 11:04,2012-06-20 11:04,admin,admin,,,
517,83634,772,10539,794,1,0,N,N,N,CP_Drtn,TT_Task,DT_FixedDUR2,RV_OK,TK_NotStart,PRT121,Piping Bulk material 1st batch,,-0.016667,536,240,0,0,0,240,0,0,0,2012-05-07 17:00,,,2012-05-07 16:59,2012-06-06 16:59,,2012-05-08 08:00,2012-06-06 17:00,2012-05-08 08:00,2012-06-06 17:00,2012-05-08 08:00,2012-06-06 17:00,,2012-05-07 16:59,2012-06-06 16:59,CS_MSO,PT_Normal,,,,,58zamalnX0upt6W84TX+8g,DqLN36xRQY+kZsfpyGsU9w,,,N,0,0,,,2012-06-20 11:04,2012-06-20 11:04,admin,admin,,,
518,83635,772,10539,794,1,0,N,N,N,CP_Drtn,TT_Task,DT_FixedDUR2,RV_OK,TK_NotStart,PRT122,Piping Bulk material 2nd batch,,-0.016667,855,240,0,0,0,240,0,0,0,2012-06-10 17:00,,,2012-06-10 16:59,2012-07-10 16:59,,2012-06-11 08:00,2012-07-10 17:00,2012-06-11 08:00,2012-07-10 17:00,2012-06-11 08:00,2012-07-10 17:00,,2012-06-10 16:59,2012-07-10 16:59,CS_MSO,PT_Normal,,,,,gfqBoSlPB0qB97XuoLSgig,fRmh57i3SamJM0o1p2/3vA,,,N,0,0,,,2012-06-20 11:04,2012-06-20 11:04,admin,admin,,,
519,83636,772,10539,794,1,0,N,N,N,CP_Drtn,TT_Task,DT_FixedDUR2,RV_OK,TK_NotStart,PRT63,Piping Valves Bulk material 1st batch,,-0.016667,999,112,0,0,0,112,0,0,0,2012-06-23 17:00,,,2012-06-23 16:59,2012-07-07 16:59,,2012-06-24 08:00,2012-07-07 17:00,2012-06-24 08:00,2012-07-07 17:00,2012-06-24 08:00,2012-07-07 17:00,,2012-06-23 16:59,2012-07-07 16:59,CS_MSO,PT_Normal,,,,,I/0qEICVRUaxHyDpzQv0iA,7wg9/w/MQ7a7zI20+pTM+A,,,N,0,0,,,2012-06-20 11:04,2012-06-20 11:04,admin,admin,,,
520,83637,772,10539,794,1,0,N,N,N,CP_Drtn,TT_Task,DT_FixedDUR2,RV_OK,TK_NotStart,PRT64,Piping valves Bulk material 2nd batch,,-0.016667,767,112,0,0,0,112,0,0,0,2012-07-22 17:00,,,2012-07-22 16:59,2012-08-05 16:59,,2012-07-23 08:00,2012-08-05 17:00,2012-07-23 08:00,2012-08-05 17:00,2012-07-23 08:00,2012-08-05 17:00,,2012-07-22 16:59,2012-08-05 16:59,CS_MSO,PT_Normal,,,,,uW/SVWWXVEKQIJf0TzSCmA,iGFfO+XNTpqt+16+eOx2EA,,,N,0,0,,,2012-06-20 11:04,2012-06-20 11:04,admin,admin,,,
521,83638,772,10539,794,1,0,N,N,N,CP_Drtn,TT_Task,DT_FixedDUR2,RV_OK,TK_NotStart,PRT65,Flanges,,-0.016667,8,360,0,0,0,360,0,0,0,2012-07-13 17:00,,,2012-07-13 16:59,2012-08-27 16:59,,2012-07-14 08:00,2012-08-27 17:00,2012-07-14 08:00,2012-08-27 17:00,2012-07-14 08:00,2012-08-27 17:00,,2012-07-13 16:59,2012-08-27 16:59,CS_MSO,PT_Normal,,,,,E7+qdkG45kejDiOT6w/pzg,VAq1SSMERrmj1gqIqoQiTg,,,N,0,0,,,2012-06-20 11:04,2012-06-20 11:04,admin,admin,,,
522,83639,772,10539,794,1,0,N,N,N,CP_Drtn,TT_Task,DT_FixedDUR2,RV_OK,TK_NotStart,PRT66,Pressure Safety Valve,,-0.016667,1519,352,0,0,0,352,0,0,0,2012-06-04 17:00,,,2012-06-04 16:59,2012-07-18 16:59,,2012-06-05 08:00,2012-07-18 17:00,2012-06-05 08:00,2012-07-18 17:00,2012-06-05 08:00,2012-07-18 17:00,,2012-06-04 16:59,2012-07-18 16:59,CS_MSO,PT_Normal,,,,,gpI8ErmWHEyYOU9XGmUB2w,+SvOOjbVT6SM2f4LWOHEpg,,,N,0,0,,,2012-06-20 11:04,2012-06-20 11:04,admin,admin,,,
523,83640,772,10539,794,1,0,N,N,N,CP_Drtn,TT_Task,DT_FixedDUR2,RV_OK,TK_NotStart,PRT67,Pressure regulator Valve,,-0.016667,1231,240,0,0,0,240,0,0,0,2012-07-24 17:00,,,2012-07-24 16:59,2012-08-23 16:59,,2012-07-25 08:00,2012-08-23 17:00,2012-07-25 08:00,2012-08-23 17:00,2012-07-25 08:00,2012-08-23 17:00,,2012-07-24 16:59,2012-08-23 16:59,CS_MSO,PT_Normal,,,,,AhnddOOKZ02fsdYdtUMESQ,FkVucARhQlCiyikicegBhQ,,,N,0,0,,,2012-06-20 11:04,2012-06-20 11:04,admin,admin,,,
524,83641,772,10539,794,1,0,N,N,N,CP_Drtn,TT_Task,DT_FixedDUR2,RV_OK,TK_NotStart,PRT68,Shutdown Valve,,-0.016667,1135,248,0,0,0,248,0,0,0,2012-08-04 17:00,,,2012-08-04 16:59,2012-09-04 16:59,,2012-08-05 08:00,2012-09-04 17:00,2012-08-05 08:00,2012-09-04 17:00,2012-08-05 08:00,2012-09-04 17:00,,2012-08-04 16:59,2012-09-04 16:59,CS_MSO,PT_Normal,,,,,mNHJW+ns8UWpyCJrN7VsRQ,GViNUzKNR0i8XYjXx02J5Q,,,N,0,0,,,2012-06-20 11:04,2012-06-20 11:04,admin,admin,,,
525,83642,772,10540,794,1,0,N,N,N,CP_Drtn,TT_Task,DT_FixedDUR2,RV_OK,TK_NotStart,PRT69,Chemical Injection PKG.,,-0.016667,1264,360,0,0,0,360,0,0,0,2012-05-08 17:00,,,2012-05-08 16:59,2012-06-22 16:59,,2012-05-09 08:00,2012-06-22 17:00,2012-05-09 08:00,2012-06-22 17:00,2012-05-09 08:00,2012-06-22 17:00,,2012-05-08 16:59,2012-06-22 16:59,CS_MSO,PT_Normal,,,,,nb9WwIaut0unElRtJwTB7A,eKvs6VRWSyOb6HNtkF9+AA,,,N,0,0,,,2012-06-20 11:04,2012-06-20 11:04,admin,admin,,,
526,83643,772,10540,794,1,0,N,N,N,CP_Drtn,TT_Task,DT_FixedDUR2,RV_OK,TK_NotStart,PRT70,Launcher recivier,,-0.016667,960,360,0,0,0,360,0,0,0,2012-06-15 17:00,,,2012-06-15 16:59,2012-07-30 16:59,,2012-06-16 08:00,2012-07-30 17:00,2012-06-16 08:00,2012-07-30 17:00,2012-06-16 08:00,2012-07-30 17:00,,2012-06-15 16:59,2012-07-30 16:59,CS_MSO,PT_Normal,,,,,NK69eWGbDUaw4mxziMGS8g,3IwzhhfhR3KgxUsvdJ6rqQ,,,N,0,0,,,2012-06-20 11:04,2012-06-20 11:04,admin,admin,,,
527,83644,772,10540,794,1,0,N,N,N,CP_Drtn,TT_Task,DT_FixedDUR2,RV_OK,TK_NotStart,PRT131,Vent KOD,,-0.016667,864,360,0,0,0,360,0,0,0,2012-06-27 17:00,,,2012-06-27 16:59,2012-08-11 16:59,,2012-06-28 08:00,2012-08-11 17:00,2012-06-28 08:00,2012-08-11 17:00,2012-06-28 08:00,2012-08-11 17:00,,2012-06-27 16:59,2012-08-11 16:59,CS_MSO,PT_Normal,,,,,ucvgMZCgFUKMkZRDfUZYFQ,V+De5pWvTHyHzJo6bSHRww,,,N,0,0,,,2012-06-20 11:04,2012-06-20 11:04,admin,admin,,,
528,83645,772,10540,794,1,0,N,N,N,CP_Drtn,TT_Task,DT_FixedDUR2,RV_OK,TK_NotStart,PRT132,Open Drain Tank,,-0.016667,624,360,0,0,0,360,0,0,0,2012-06-27 17:00,,,2012-06-27 16:59,2012-08-11 16:59,,2012-06-28 08:00,2012-08-11 17:00,2012-06-28 08:00,2012-08-11 17:00,2012-06-28 08:00,2012-08-11 17:00,,2012-06-27 16:59,2012-08-11 16:59,CS_MSO,PT_Normal,,,,,QTQDVQ87LUavQWf+iLvc2w,Dvo6DiXYTvSm95/lOoAUnw,,,N,0,0,,,2012-06-20 11:04,2012-06-20 11:04,admin,admin,,,
529,83646,772,10541,794,1,0,N,N,N,CP_Drtn,TT_Task,DT_FixedDUR2,RV_OK,TK_NotStart,PRS63,Delivery of Structure Material (F.O.B - 13 Wks.) - (Gupco Responsability),,0,0,728,0,0,0,728,0,0,0,,,,2012-02-15 08:00,2012-05-15 17:00,,2012-02-15 08:00,2012-05-15 17:00,2012-02-15 08:00,2012-05-15 17:00,2012-02-15 08:00,2012-05-15 17:00,,2012-02-15 08:00,2012-05-15 17:00,,PT_Normal,,,,,Xe+Z1W4o30itkpZIgS+S8w,dmjGd5dtRyGQN7eIgjvWtA,,,Y,0,0,,,2012-06-20 11:04,2012-06-20 11:04,admin,admin,,,
530,83647,772,10541,794,1,0,N,N,N,CP_Drtn,TT_Task,DT_FixedDUR2,RV_OK,TK_NotStart,PRS65,Material check with IFC DWG's to Prepare balance material,,1566.983333,0,56,0,0,0,56,0,0,0,,,,2012-10-28 16:00,2012-11-04 16:00,,2012-04-16 08:01,2012-04-23 08:01,2012-04-16 08:01,2012-04-23 08:01,2012-04-16 08:01,2012-04-23 08:01,,2012-10-28 16:00,2012-11-04 16:00,,PT_Normal,,,,,fMNR5L234EWpRAMiTseR1Q,TiJCnNvxQjGqD/lEVDLgtw,,,N,0,0,,,2012-06-20 11:04,2012-06-20 11:04,admin,admin,,,
531,83648,772,10541,794,1,0,N,N,N,CP_Drtn,TT_Task,DT_FixedDUR2,RV_OK,TK_NotStart,PRS66,Delivery of balance material,,1566.983333,1566.983333,1232,0,0,0,1232,0,0,0,,,,2012-11-04 16:00,2013-04-07 16:00,,2012-04-23 08:01,2012-09-24 08:01,2012-04-23 08:01,2012-09-24 08:01,2012-04-23 08:01,2012-09-24 08:01,,2012-11-04 16:00,2013-04-07 16:00,,PT_Normal,,,,,tX8yQV0Ny0WRxZLtKLnyag,oU6FnPOSQS+kCV/HY5y5yA,,,N,0,0,,,2012-06-20 11:04,2012-06-20 11:04,admin,admin,,,
532,83649,772,10541,794,0,0,N,N,N,CP_Drtn,TT_Mile,DT_FixedDrtn,RV_OK,TK_NotStart,PRS61,Issue Structural Material P.O's ( Gupco Responsability),,0,64,0,0,0,0,0,0,0,0,2012-02-07 08:00,,,2012-02-07 08:00,2012-02-07 08:00,,2012-02-07 08:00,2012-02-07 08:00,2012-02-07 08:00,2012-02-07 08:00,2012-02-07 08:00,2012-02-07 08:00,,2012-02-07 08:00,2012-02-07 08:00,CS_MSO,PT_Normal,,,,,7HyJExOBpkGhIFoeNBZhEA,xF9X1iufT72bd1+OFKWOyQ,,,N,0,0,,,2012-06-20 11:04,2012-06-20 11:04,admin,admin,,,
533,83650,772,10541,794,0,0,N,N,N,CP_Drtn,TT_Mile,DT_FixedDrtn,RV_OK,TK_NotStart,PRS62,Issue LC ( Gupco Responsability),,0,0,0,0,0,0,0,0,0,0,2012-02-15 08:00,,,2012-02-15 08:00,2012-02-15 08:00,,2012-02-15 08:00,2012-02-15 08:00,2012-02-15 08:00,2012-02-15 08:00,2012-02-15 08:00,2012-02-15 08:00,,2012-02-15 08:00,2012-02-15 08:00,CS_MSO,PT_Normal,,,,,dnT9Ki6OfUCyrwvHWeKltg,um/v71UCSm2K8HwIWZ36mg,,,Y,0,0,,,2012-06-20 11:04,2012-06-20 11:04,admin,admin,,,
534,83651,772,10541,794,1,0,N,N,N,CP_Drtn,TT_Task,DT_FixedDUR2,RV_OK,TK_NotStart,PRS64,Delivery of Structure Material at Site (4 Wks.),,0,0,224,0,0,0,224,0,0,0,,,,2012-05-16 08:00,2012-06-12 17:00,,2012-05-16 08:00,2012-06-12 17:00,2012-05-16 08:00,2012-06-12 17:00,2012-05-16 08:00,2012-06-12 17:00,,2012-05-16 08:00,2012-06-12 17:00,,PT_Normal,,,,,6TjUr/7iAkOPjEK3s/H/EA,FqPfFJhLQ+SL9TfNEDcs7w,,,Y,0,0,,,2012-06-20 11:04,2012-06-20 11:04,admin,admin,,,
535,83652,772,10542,794,1,0,N,N,N,CP_Drtn,TT_Task,DT_FixedDrtn,RV_OK,TK_NotStart,PRP61,"Pipeline 18"""" & Fittings",,0,0,408,0,0,0,408,0,0,0,2012-05-31 08:00,,,2012-05-31 08:00,2012-07-20 17:00,,2012-05-31 08:00,2012-07-20 17:00,2012-05-31 08:00,2012-07-20 17:00,2012-05-31 08:00,2012-07-20 17:00,,2012-05-31 08:00,2012-07-20 17:00,CS_MSO,PT_Normal,,,,,4/D+HLIdBEeTwIb4NeAaBA,8zKzqtp8RUKmTAsXxykRFA,,,N,0,0,,,2012-06-20 11:04,2012-06-20 11:04,admin,admin,,,
536,83653,772,10542,794,1,0,N,N,N,CP_Drtn,TT_Task,DT_FixedDrtn,RV_OK,TK_NotStart,PRP122,"Pipeline 8"""" & Fittings",,-0.016667,351,408,0,0,0,408,0,0,0,2012-05-30 17:00,,,2012-05-30 16:59,2012-07-20 16:59,,2012-05-31 08:00,2012-07-20 17:00,2012-05-31 08:00,2012-07-20 17:00,2012-05-31 08:00,2012-07-20 17:00,,2012-05-30 16:59,2012-07-20 16:59,CS_MSO,PT_Normal,,,,,kKDGWWTooUqhzJqmrkU46A,Z/LKROCTRSGDBSNh6tw23g,,,N,0,0,,,2012-06-20 11:04,2012-06-20 11:04,admin,admin,,,
537,83654,772,10552,794,1,0,N,N,N,CP_Drtn,TT_Task,DT_FixedDUR2,RV_OK,TK_NotStart,PRE67,Radar system,,-0.016667,904,240,0,0,0,240,0,0,0,2012-06-19 17:00,,,2012-06-19 16:59,2012-07-19 16:59,,2012-06-20 08:00,2012-07-19 17:00,2012-06-20 08:00,2012-07-19 17:00,2012-06-20 08:00,2012-07-19 17:00,,2012-06-19 16:59,2012-07-19 16:59,CS_MSO,PT_Normal,,,,,e23KO0moL0CRbMK6SCXTtQ,fN9/pTqqS/2bIA0m5B7Ztw,,,N,0,0,,,2012-06-20 11:04,2012-06-20 11:04,admin,admin,,,
538,83655,772,10552,794,1,0,N,N,N,CP_Drtn,TT_Task,DT_FixedDUR2,RV_OK,TK_NotStart,PRE68,Navegation Aids,,-0.016667,1384,360,0,0,0,360,0,0,0,2012-04-05 17:00,,,2012-04-05 16:59,2012-05-20 16:59,,2012-04-06 08:00,2012-05-20 17:00,2012-04-06 08:00,2012-05-20 17:00,2012-04-06 08:00,2012-05-20 17:00,,2012-04-05 16:59,2012-05-20 16:59,CS_MSO,PT_Normal,,,,,ai0jh9A2uUeoEazMl7xCIA,/agS5N51QBGq3ZFFA4yHkQ,,,N,0,0,,,2012-06-20 11:04,2012-06-20 11:04,admin,admin,,,
539,83656,772,10553,794,1,0,N,N,N,CP_Drtn,TT_Task,DT_FixedDUR2,RV_OK,TK_NotStart,PRE121,Electrical Bulks,,-0.016667,512,360,0,0,0,360,0,0,0,2012-07-23 17:00,,,2012-07-23 16:59,2012-09-06 16:59,,2012-07-24 08:00,2012-09-06 17:00,2012-07-24 08:00,2012-09-06 17:00,2012-07-24 08:00,2012-09-06 17:00,,2012-07-23 16:59,2012-09-06 16:59,CS_MSO,PT_Normal,,,,,kcTnO9uz20e5NC7Rm3aZEQ,vQ/i5SbETo6/zhp0lbrKxA,,,N,0,0,,,2012-06-20 11:04,2012-06-20 11:04,admin,admin,,,
540,83657,772,10553,794,1,0,N,N,N,CP_Drtn,TT_Task,DT_FixedDUR2,RV_OK,TK_NotStart,PRE122,Cathodic Protection,,-0.016667,1000,360,0,0,0,360,0,0,0,2012-05-23 17:00,,,2012-05-23 16:59,2012-07-07 16:59,,2012-05-24 08:00,2012-07-07 17:00,2012-05-24 08:00,2012-07-07 17:00,2012-05-24 08:00,2012-07-07 17:00,,2012-05-23 16:59,2012-07-07 16:59,CS_MSO,PT_Normal,,,,,i//POAg8W0aa+kF/gvYckg,Iw4lArETRiW8xPu6VxnShg,,,N,0,0,,,2012-06-20 11:04,2012-06-20 11:04,admin,admin,,,
541,83658,772,10553,794,1,0,N,N,N,CP_Drtn,TT_Task,DT_FixedDUR2,RV_OK,TK_NotStart,PRE123,Solar Power,,-0.016667,912,360,0,0,0,360,0,0,0,2012-06-03 17:00,,,2012-06-03 16:59,2012-07-18 16:59,,2012-06-04 08:00,2012-07-18 17:00,2012-06-04 08:00,2012-07-18 17:00,2012-06-04 08:00,2012-07-18 17:00,,2012-06-03 16:59,2012-07-18 16:59,CS_MSO,PT_Normal,,,,,Yikbjdl8SkStUweyIuXBTQ,VN0an5lGRoaFh0fMNvkkFA,,,N,0,0,,,2012-06-20 11:04,2012-06-20 11:04,admin,admin,,,
542,83659,772,10550,794,1,0,N,N,N,CP_Drtn,TT_Task,DT_FixedDUR2,RV_OK,TK_NotStart,PRE64,F&G Detector,,-0.016667,648,360,0,0,0,360,0,0,0,2012-07-06 17:00,,,2012-07-06 16:59,2012-08-20 16:59,,2012-07-07 08:00,2012-08-20 17:00,2012-07-07 08:00,2012-08-20 17:00,2012-07-07 08:00,2012-08-20 17:00,,2012-07-06 16:59,2012-08-20 16:59,CS_MSO,PT_Normal,,,,,al66H+VTxk68k4dInpKasw,VSwOK9yIRUSoxROQDvdw7g,,,N,0,0,,,2012-06-20 11:04,2012-06-20 11:04,admin,admin,,,
543,83660,772,10550,794,1,0,N,N,N,CP_Drtn,TT_Task,DT_FixedDUR2,RV_OK,TK_NotStart,PRE65,Fire fighting system,,-0.016667,720,360,0,0,0,360,0,0,0,2012-06-27 17:00,,,2012-06-27 16:59,2012-08-11 16:59,,2012-06-28 08:00,2012-08-11 17:00,2012-06-28 08:00,2012-08-11 17:00,2012-06-28 08:00,2012-08-11 17:00,,2012-06-27 16:59,2012-08-11 16:59,CS_MSO,PT_Normal,,,,,ci4a4QAkqUmnCMpZ7PJxVg,tpzm+A81SOKv9OzobhMGlw,,,N,0,0,,,2012-06-20 11:04,2012-06-20 11:04,admin,admin,,,
544,83661,772,10550,794,1,0,N,N,N,CP_Drtn,TT_Task,DT_FixedDUR2,RV_OK,TK_NotStart,PRE66,Life Saving Equipment,,-0.016667,664,360,0,0,0,360,0,0,0,2012-07-04 17:00,,,2012-07-04 16:59,2012-08-18 16:59,,2012-07-05 08:00,2012-08-18 17:00,2012-07-05 08:00,2012-08-18 17:00,2012-07-05 08:00,2012-08-18 17:00,,2012-07-04 16:59,2012-08-18 16:59,CS_MSO,PT_Normal,,,,,xNyLBz1feku2Qnh1UQol/A,KFlMp1iuR7Ggn/R36j8DNg,,,N,0,0,,,2012-06-20 11:04,2012-06-20 11:04,admin,admin,,,
545,83662,772,10551,794,1,0,N,N,N,CP_Drtn,TT_Task,DT_FixedDUR2,RV_OK,TK_NotStart,PRE69,Instrument Electical Bulk,,-0.016667,624,240,0,0,0,240,0,0,0,2012-07-24 17:00,,,2012-07-24 16:59,2012-08-23 16:59,,2012-07-25 08:00,2012-08-23 17:00,2012-07-25 08:00,2012-08-23 17:00,2012-07-25 08:00,2012-08-23 17:00,,2012-07-24 16:59,2012-08-23 16:59,CS_MSO,PT_Normal,,,,,b0k87K3C+EOhihNfwtQ8nw,nbERwAGrT3emToa6M54rSw,,,N,0,0,,,2012-06-20 11:04,2012-06-20 11:04,admin,admin,,,
546,83663,772,10551,794,1,0,N,N,N,CP_Drtn,TT_Task,DT_FixedDUR2,RV_OK,TK_NotStart,PRE70,Instrument Mechanical Bulk,,-0.016667,640,280,0,0,0,280,0,0,0,2012-07-17 17:00,,,2012-07-17 16:59,2012-08-21 16:59,,2012-07-18 08:00,2012-08-21 17:00,2012-07-18 08:00,2012-08-21 17:00,2012-07-18 08:00,2012-08-21 17:00,,2012-07-17 16:59,2012-08-21 16:59,CS_MSO,PT_Normal,,,,,kyyGTujbSEyhNyedbl1lbw,I5ckdTYuQTKukOCM1JedFw,,,N,0,0,,,2012-06-20 11:04,2012-06-20 11:04,admin,admin,,,
547,83664,772,10551,794,1,0,N,N,N,CP_Drtn,TT_Task,DT_FixedDUR2,RV_OK,TK_NotStart,PRE131,Field Instrument,,-0.016667,760,360,0,0,0,360,0,0,0,2012-06-22 17:00,,,2012-06-22 16:59,2012-08-06 16:59,,2012-06-23 08:00,2012-08-06 17:00,2012-06-23 08:00,2012-08-06 17:00,2012-06-23 08:00,2012-08-06 17:00,,2012-06-22 16:59,2012-08-06 16:59,CS_MSO,PT_Normal,,,,,6QBvxTdylEWWt87gFGgacQ,M/41QxsNRJS7+vZ1Rp7jJg,,,N,0,0,,,2012-06-20 11:04,2012-06-20 11:04,admin,admin,,,
548,83665,772,10551,794,1,0,N,N,N,CP_Drtn,TT_Task,DT_FixedDUR2,RV_OK,TK_NotStart,PRE132,multi phase flow meter,,-0.016667,1095,456,0,0,0,456,0,0,0,2012-07-17 17:00,,,2012-07-17 16:59,2012-09-12 16:59,,2012-07-18 08:00,2012-09-12 17:00,2012-07-18 08:00,2012-09-12 17:00,2012-07-18 08:00,2012-09-12 17:00,,2012-07-17 16:59,2012-09-12 16:59,CS_MSO,PT_Normal,,,,,/FAHmZGJfkq7TD2O51fVAA,VbJvQNUwQvmr5G5TNU296w,,,N,0,0,,,2012-06-20 11:04,2012-06-20 11:04,admin,admin,,,
549,83666,772,10551,794,1,0,N,N,N,CP_Drtn,TT_Task,DT_FixedDUR2,RV_OK,TK_NotStart,PRE133,Safe Guard system,,-0.016667,1063,240,0,0,0,240,0,0,0,2012-08-17 17:00,,,2012-08-17 16:59,2012-09-16 16:59,,2012-08-18 08:00,2012-09-16 17:00,2012-08-18 08:00,2012-09-16 17:00,2012-08-18 08:00,2012-09-16 17:00,,2012-08-17 16:59,2012-09-16 16:59,CS_MSO,PT_Normal,,,,,RjCt9a9XxE60WG/2pDG/bA,jReSS16pSoan6pMZsdEk8g,,,N,0,0,,,2012-06-20 11:04,2012-06-20 11:04,admin,admin,,,
550,83667,772,10543,841,1,0,N,N,N,CP_Drtn,TT_Task,DT_FixedDUR2,RV_OK,TK_NotStart,JK61,"Jacket , Boat Landing Fabrication & Painting",,208,0,1400,0,0,0,1400,0,0,0,,,,2012-07-22 08:00,2013-02-24 16:00,,2012-06-21 08:00,2013-01-22 16:00,2012-06-21 08:00,2013-01-22 16:00,2012-06-21 08:00,2013-01-22 16:00,,2012-07-22 08:00,2013-02-24 16:00,,PT_Normal,,,,,nKQnjuDMNkOHMk7gC5J17g,MJjexNjLRy6cxfkloFqepA,,,N,0,0,,,2012-06-20 11:04,2012-06-20 11:04,admin,admin,,,
551,83668,772,10543,841,1,0,N,N,N,CP_Drtn,TT_Task,DT_FixedDUR2,RV_OK,TK_NotStart,JK62,Piles Fabrication & Marking,,592,592,1000,0,0,0,1000,0,0,0,,,,2012-11-08 08:00,2013-04-07 16:00,,2012-08-06 08:00,2013-01-08 16:00,2012-08-06 08:00,2013-01-08 16:00,2012-08-06 08:00,2013-01-08 16:00,,2012-11-08 08:00,2013-04-07 16:00,,PT_Normal,,,,,IoJS3tpyaU2IyWVPj9+t/g,cmwt03k5QUWVZ2X2eta6kg,,,N,0,0,,,2012-06-20 11:04,2012-06-20 11:04,admin,admin,,,
552,83669,772,10554,841,1,0,N,N,N,CP_Drtn,TT_Task,DT_FixedDUR2,RV_OK,TK_NotStart,DS071,Fabrication and Painting of Below Production Deck/Legs,,0,0,840,0,0,0,840,0,0,0,,,,2012-06-13 08:00,2012-10-18 16:00,,2012-06-13 08:00,2012-10-18 16:00,2012-06-13 08:00,2012-10-18 16:00,2012-06-13 08:00,2012-10-18 16:00,,2012-06-13 08:00,2012-10-18 16:00,,PT_Normal,,,,,RgU+LIyaBEGtaKt9MFUSag,YDhnGt4WSampcAcCK/B2gQ,,,Y,0,0,,,2012-06-20 11:04,2012-06-20 11:04,admin,admin,,,
553,83670,772,10554,841,1,0,N,N,N,CP_Drtn,TT_Task,DT_FixedDUR2,RV_OK,TK_NotStart,DS072,Fabrication and Painting of Production Deck,,0,0,960,0,0,0,960,0,0,0,,,,2012-06-13 08:00,2012-11-08 16:00,,2012-06-13 08:00,2012-11-08 16:00,2012-06-13 08:00,2012-11-08 16:00,2012-06-13 08:00,2012-11-08 16:00,,2012-06-13 08:00,2012-11-08 16:00,,PT_Normal,,,,,QjGa7pUhHUKufcz7eK1z7g,xFi93CoKSi++4GmIMxpP9w,,,Y,0,0,,,2012-06-20 11:04,2012-06-20 11:04,admin,admin,,,
554,83671,772,10554,841,1,0,N,N,N,CP_Drtn,TT_Task,DT_FixedDUR2,RV_OK,TK_NotStart,DS073,Fabrication and Paint of Heli-Deck ( & Lifting if Required),,400,0,960,0,0,0,960,0,0,0,,,,2012-10-29 08:00,2013-03-21 16:00,,2012-08-27 08:00,2013-01-20 16:00,2012-08-27 08:00,2013-01-20 16:00,2012-08-27 08:00,2013-01-20 16:00,,2012-10-29 08:00,2013-03-21 16:00,,PT_Normal,,,,,vq+dvQE8PEKcxpNynt7W7A,rvAg4dTFTzOC9LQPbMvlVA,,,N,0,0,,,2012-06-20 11:04,2012-06-20 11:04,admin,admin,,,
555,83672,772,10554,841,1,0,N,N,N,CP_Drtn,TT_Task,DT_FixedDUR2,RV_OK,TK_NotStart,DS074,Lifting Below Production Deck on High Cups,,24,0,40,0,0,0,40,0,0,0,,,,2012-10-23 08:00,2012-10-31 16:00,,2012-10-20 08:00,2012-10-24 16:00,2012-10-20 08:00,2012-10-24 16:00,2012-10-20 08:00,2012-10-24 16:00,,2012-10-23 08:00,2012-10-31 16:00,,PT_Normal,,,,,G1RXWtcamUyzUPyY20jHZg,bQ+CxC0TQriVcwNqie/vXQ,,,N,0,0,,,2012-06-20 11:04,2012-06-20 11:04,admin,admin,,,
556,83673,772,10554,841,1,0,N,N,N,CP_Drtn,TT_Task,DT_FixedDUR2,RV_OK,TK_NotStart,DS075,Lifting Production Deck on Below Production Level,,0,0,120,0,0,0,120,0,0,0,,,,2012-11-10 08:00,2012-11-27 16:00,,2012-11-10 08:00,2012-11-27 16:00,2012-11-10 08:00,2012-11-27 16:00,2012-11-10 08:00,2012-11-27 16:00,,2012-11-10 08:00,2012-11-27 16:00,,PT_Normal,,,,,gKI2c7a3hEycmy4pmUHuBQ,kvv6UChdRT2TML26fqP2Og,,,Y,0,0,,,2012-06-20 11:04,2012-06-20 11:04,admin,admin,,,
557,83674,772,10554,841,1,0,N,N,N,CP_Drtn,TT_Task,DT_FixedDUR2,RV_OK,TK_NotStart,DS076,Fabrication & Installation of Deck Str. Miscellence / Padeyes,,80,24,960,0,0,0,960,0,0,0,,,,2012-10-17 08:00,2013-03-13 16:00,,2012-10-04 08:00,2013-03-02 16:00,2012-10-04 08:00,2013-03-02 16:00,2012-10-04 08:00,2013-03-02 16:00,,2012-10-17 08:00,2013-03-13 16:00,,PT_Normal,,,,,OSNFpHhX2E2lksm4rsD+HQ,CWEx43mfRrCS6ZOEt8Q5OA,,,N,0,0,,,2012-06-20 11:04,2012-06-20 11:04,admin,admin,,,
558,83675,772,10554,841,0,0,N,N,N,CP_Drtn,TT_FinMile,DT_FixedDrtn,RV_OK,TK_NotStart,DS077,Physical Weighting,,80,0,0,0,0,0,0,0,0,0,,,,2013-03-06 16:00,2013-03-06 16:00,,2013-02-23 16:00,2013-02-23 16:00,2013-02-23 16:00,2013-02-23 16:00,2013-02-23 16:00,2013-02-23 16:00,,2013-03-06 16:00,2013-03-06 16:00,,PT_Normal,,,,,fb/OCxi7ykqEOPy/abVchQ,dU19c7ngSBGK2PpNjJWMWA,,,N,0,0,,,2012-06-20 11:04,2012-06-20 11:04,admin,admin,,,
559,83676,772,10554,841,1,0,N,N,N,CP_Drtn,TT_Task,DT_FixedDUR2,RV_OK,TK_NotStart,DS068,Clearanse of structure (Fab. & Painting ) Punch List,,56,56,168,0,0,0,168,0,0,0,,,,2013-03-14 08:00,2013-04-07 16:00,,2013-03-06 08:00,2013-03-30 16:00,2013-03-06 08:00,2013-03-30 16:00,2013-03-06 08:00,2013-03-30 16:00,,2013-03-14 08:00,2013-04-07 16:00,,PT_Normal,,,,,07cjfsuzPEW2qnJIgYo/aw,2xbSngZtS1yuYdYRZesY/A,,,N,0,0,,,2012-06-20 11:04,2012-06-20 11:04,admin,admin,,,
560,83677,772,10556,841,1,0,N,N,N,CP_Drtn,TT_Task,DT_FixedDUR2,RV_OK,TK_NotStart,TFS061,Piping and Piping Supports Fabrication and Painting,,320,320,800,0,0,0,800,0,0,0,,,,2012-09-10 08:00,2013-01-10 16:00,,2012-07-21 08:00,2012-11-24 16:00,2012-07-21 08:00,2012-11-24 16:00,2012-07-21 08:00,2012-11-24 16:00,,2012-09-10 08:00,2013-01-10 16:00,,PT_Normal,,,,,pB5/E86upka069sybMVh6w,MmyOxGLAQBKzrY9ic24SKw,,,N,0,0,,,2012-06-20 11:04,2012-06-20 11:04,admin,admin,,,
561,83678,772,10556,841,1,0,N,N,N,CP_Drtn,TT_Task,DT_FixedDUR2,RV_OK,TK_NotStart,TSF062,Piping and Piping Supports Erection,,0,0,600,0,0,0,600,0,0,0,,,,2012-11-25 08:00,2013-02-23 16:00,,2012-11-25 08:00,2013-02-23 16:00,2012-11-25 08:00,2013-02-23 16:00,2012-11-25 08:00,2013-02-23 16:00,,2012-11-25 08:00,2013-02-23 16:00,,PT_Normal,,,,,LcocPaD/MU6B+Bp7LS8bcQ,sdcBHYglTkmbL+zUfSnz1Q,,,Y,0,0,,,2012-06-20 11:04,2012-06-20 11:04,admin,admin,,,
562,83679,772,10557,841,1,0,N,N,N,CP_Drtn,TT_Task,DT_FixedDUR2,RV_OK,TK_NotStart,TSF073,Equipment Erection on Below Production Level,,24,24,56,0,0,0,56,0,0,0,,,,2012-11-01 08:00,2012-11-08 16:00,,2012-10-29 08:00,2012-11-05 16:00,2012-10-29 08:00,2012-11-05 16:00,2012-10-29 08:00,2012-11-05 16:00,,2012-11-01 08:00,2012-11-08 16:00,,PT_Normal,,,,,Ir5KYlMaS0iS4VAeVSlF2Q,z1CTK+RVT2ODKyZP+ZU/NQ,,,N,0,0,,,2012-06-20 11:04,2012-06-20 11:04,admin,admin,,,
563,83680,772,10557,841,1,0,N,N,N,CP_Drtn,TT_Task,DT_FixedDUR2,RV_OK,TK_NotStart,TSF074,Equipment Erection on Production Level,,216,216,120,0,0,0,120,0,0,0,,,,2012-12-30 08:00,2013-01-16 16:00,,2012-11-28 08:00,2012-12-15 16:00,2012-11-28 08:00,2012-12-15 16:00,2012-11-28 08:00,2012-12-15 16:00,,2012-12-30 08:00,2013-01-16 16:00,,PT_Normal,,,,,XgWWHJiCp06CnC2EAl/zWw,uRd8e2PwTCikyeTQ2cwlXg,,,N,0,0,,,2012-06-20 11:04,2012-06-20 11:04,admin,admin,,,
564,83681,772,10557,841,1,0,N,N,N,CP_Drtn,TT_Task,DT_FixedDUR2,RV_OK,TK_NotStart,TSF075,Equipment Erection on Helideck,,400,400,56,0,0,0,56,0,0,0,,,,2013-02-16 08:00,2013-02-23 16:00,,2012-12-16 08:00,2012-12-23 16:00,2012-12-16 08:00,2012-12-23 16:00,2012-12-16 08:00,2012-12-23 16:00,,2013-02-16 08:00,2013-02-23 16:00,,PT_Normal,,,,,3OOxirOSEEShrc00k9imQg,aPJaRDLhRCS2fQT2L4W4XQ,,,N,0,0,,,2012-06-20 11:04,2012-06-20 11:04,admin,admin,,,
565,83682,772,10558,841,1,0,N,N,N,CP_Drtn,TT_Task,DT_FixedDUR2,RV_OK,TK_NotStart,TS67,E&I Activity,,16,16,720,0,0,0,720,0,0,0,,,,2012-11-12 08:00,2013-02-28 16:00,,2012-11-10 08:00,2013-02-26 16:00,2012-11-10 08:00,2013-02-26 16:00,2012-11-10 08:00,2013-02-26 16:00,,2012-11-12 08:00,2013-02-28 16:00,,PT_Normal,,,,,fmK4wpNGk02MPgc9WSkroQ,wsdfJJRZTh6vVDGXiSaIkQ,,,N,0,0,,,2012-06-20 11:04,2012-06-20 11:04,admin,admin,,,
566,83683,772,10559,841,1,0,N,N,N,CP_Drtn,TT_Task,DT_FixedDUR2,RV_OK,TK_NotStart,TS68,"Pre-commissioning """" Piping Hydrotest , Reinstatment , Megering , Continuity Test and Touch Up """"",,0,0,280,0,0,0,280,0,0,0,,,,2013-02-18 08:00,2013-03-30 16:00,,2013-02-18 08:00,2013-03-30 16:00,2013-02-18 08:00,2013-03-30 16:00,2013-02-18 08:00,2013-03-30 16:00,,2013-02-18 08:00,2013-03-30 16:00,,PT_Normal,,,,,N/+uAkgEfESgLsL+ChYnwQ,lPjrgJbBSWyVdJYtkd0lWQ,,,Y,0,0,,,2012-06-20 11:04,2012-06-20 11:04,admin,admin,,,
567,83684,772,10546,841,1,0,N,N,N,CP_Drtn,TT_Task,DT_FixedDUR2,RV_OK,TK_NotStart,PL61,P/L Spools Fabrication,,832,0,720,0,0,0,720,0,0,0,,,,2012-11-07 08:00,2013-02-24 16:00,,2012-06-30 08:00,2012-10-17 16:00,2012-06-30 08:00,2012-10-17 16:00,2012-06-30 08:00,2012-10-17 16:00,,2012-11-07 08:00,2013-02-24 16:00,,PT_Normal,,,,,5hzW7OOhGUKJ9Dpdt8pJMg,HLJPh8QQQuqRB3kePFiOKw,,,N,0,0,,,2012-06-20 11:04,2012-06-20 11:04,admin,admin,,,
568,83685,772,10547,841,0,0,N,N,N,CP_Drtn,TT_Mile,DT_FixedDrtn,RV_OK,TK_NotStart,LOPS61,Arrival of 01st Shipment Material Barge ( P/L Spools),,0,128,0,0,0,0,0,0,0,0,2012-09-15 08:00,,,2012-09-15 08:00,2012-09-15 08:00,,2012-09-15 08:00,2012-09-15 08:00,2012-09-15 08:00,2012-09-15 08:00,2012-09-15 08:00,2012-09-15 08:00,,2012-09-15 08:00,2012-09-15 08:00,CS_MSO,PT_Normal,,,,,Y2z7zMqs90ODE4EAf1nWSQ,B4Hx/kkxQZKPJEG8DiZMqQ,,,N,0,0,,,2012-06-20 11:04,2012-06-20 11:04,admin,admin,,,
569,83686,772,10547,841,1,0,N,N,N,CP_Drtn,TT_Task,DT_FixedDUR2,RV_OK,TK_NotStart,LOPS62,1st Shipment Material Barge Preparation,,1088,0,96,0,0,0,96,0,0,0,,,,2013-03-20 08:00,2013-04-02 16:00,,2012-10-03 08:00,2012-10-17 16:00,2012-10-03 08:00,2012-10-17 16:00,2012-10-03 08:00,2012-10-17 16:00,,2013-03-20 08:00,2013-04-02 16:00,,PT_Normal,,,,,gJHD1xrTe0+zmjBk0tYMdw,ffJmeitJThGKpY3WVSZDNQ,,,N,0,0,,,2012-06-20 11:04,2012-06-20 11:04,admin,admin,,,
570,83687,772,10547,841,1,0,N,N,N,CP_Drtn,TT_Task,DT_FixedDUR2,RV_OK,TK_NotStart,LOPS63,"L/O & Sea Fastening (P/L Spools 18"""" & 8"""")",,1088,0,32,0,0,0,32,0,0,0,,,,2013-04-03 08:00,2013-04-07 16:00,,2012-10-18 08:00,2012-10-22 16:00,2012-10-18 08:00,2012-10-22 16:00,2012-10-18 08:00,2012-10-22 16:00,,2013-04-03 08:00,2013-04-07 16:00,,PT_Normal,,,,,GS22hm74YUyzngGHBeia7w,0IwOiWOuTGWgp9eZJV76QQ,,,N,0,0,,,2012-06-20 11:04,2012-06-20 11:04,admin,admin,,,
571,83688,772,10548,841,0,0,N,N,N,CP_Drtn,TT_Mile,DT_FixedDrtn,RV_OK,TK_NotStart,LOJK61,Arrival of 02nd Shipment Material Barge ( Jacket and Piles ),,0,263.983333,0,0,0,0,0,0,0,0,2012-12-01 08:01,,,2012-12-01 08:01,2012-12-01 08:01,,2012-12-01 08:01,2012-12-01 08:01,2012-12-01 08:01,2012-12-01 08:01,2012-12-01 08:01,2012-12-01 08:01,,2012-12-01 08:01,2012-12-01 08:01,CS_MSO,PT_Normal,,,,,XhYRQkX+BE2W6KoYm0UGgw,TZSnzFwbTP2WYUW5WMHAXA,,,N,0,0,,,2012-06-20 11:04,2012-06-20 11:04,admin,admin,,,
572,83689,772,10548,841,1,0,N,N,N,CP_Drtn,TT_Task,DT_FixedDUR2,RV_OK,TK_NotStart,LOJK62,02nd Shipment Material Barge Preparation,,208,0,96,0,0,0,96,0,0,0,,,,2013-02-11 08:00,2013-02-24 16:00,,2013-01-09 08:00,2013-01-22 16:00,2013-01-09 08:00,2013-01-22 16:00,2013-01-09 08:00,2013-01-22 16:00,,2013-02-11 08:00,2013-02-24 16:00,,PT_Normal,,,,,+cyNQLfEpkeDI2FMLez3CQ,XbtAi6jCTDyBXVHSpw5OSQ,,,N,0,0,,,2012-06-20 11:04,2012-06-20 11:04,admin,admin,,,
573,83690,772,10548,841,1,0,N,N,N,CP_Drtn,TT_Task,DT_FixedDUR2,RV_OK,TK_NotStart,LOJK63,L/O & Sea fastening ( Jacket & Piles ),,208,0,56,0,0,0,56,0,0,0,,,,2013-02-25 08:00,2013-03-04 16:00,,2013-01-23 08:00,2013-01-31 16:00,2013-01-23 08:00,2013-01-31 16:00,2013-01-23 08:00,2013-01-31 16:00,,2013-02-25 08:00,2013-03-04 16:00,,PT_Normal,,,,,7cHtdf/o/UKDeQ0A7DiviA,0h5qrf7kSZW3DGU5wFjrDw,,,N,0,0,,,2012-06-20 11:04,2012-06-20 11:04,admin,admin,,,
574,83691,772,10545,841,0,0,N,N,N,CP_Drtn,TT_Mile,DT_FixedDrtn,RV_OK,TK_NotStart,LODK61,Arrival of 03rd Shipment Material Barge ( Deck C/W TSF ),,-0.016667,104,0,0,0,0,0,0,0,0,2013-03-01 08:01,,,2013-02-28 15:59,2013-02-28 15:59,,2013-03-02 08:00,2013-03-02 08:00,2013-03-02 08:00,2013-03-02 08:00,2013-03-02 08:00,2013-03-02 08:00,,2013-02-28 15:59,2013-02-28 15:59,CS_MSO,PT_Normal,,,,,ubHmNFadf0y7ZM9/su6frA,ExIEDAbgRLSmFck0X+OxYg,,,N,0,0,,,2012-06-20 11:04,2012-06-20 11:04,admin,admin,,,
575,83692,772,10545,841,1,0,N,N,N,CP_Drtn,TT_Task,DT_FixedDUR2,RV_OK,TK_NotStart,LODK62,3rd Shipment Material Barge Preparation,,0,0,96,0,0,0,96,0,0,0,,,,2013-03-17 08:00,2013-03-30 16:00,,2013-03-17 08:00,2013-03-30 16:00,2013-03-17 08:00,2013-03-30 16:00,2013-03-17 08:00,2013-03-30 16:00,,2013-03-17 08:00,2013-03-30 16:00,,PT_Normal,,,,,v/C/AGR0Y0aE8eBk04eDsA,lPDdUYuUTIydlmlcan93BQ,,,Y,0,0,,,2012-06-20 11:04,2012-06-20 11:04,admin,admin,,,
576,83693,772,10545,841,1,0,N,N,N,CP_Drtn,TT_Task,DT_FixedDUR2,RV_OK,TK_NotStart,LODK63,L/O & Sea fastening ( Deck),,0,0,56,0,0,0,56,0,0,0,,,,2013-03-31 08:00,2013-04-07 16:00,,2013-03-31 08:00,2013-04-07 16:00,2013-03-31 08:00,2013-04-07 16:00,2013-03-31 08:00,2013-04-07 16:00,,2013-03-31 08:00,2013-04-07 16:00,,PT_Normal,,,,,WDj8l0wG6EGXUUHGVsc41w,a29m8wZtSbmmAh/FPoIQAw,,,Y,0,0,,,2012-06-20 11:04,2012-06-20 11:04,admin,admin,,,
577,83694,772,10542,794,1,0,N,N,N,CP_Drtn,TT_Task,DT_FixedDrtn,RV_OK,TK_NotStart,PRP132,"Pipeline 8"""" & Fittings",,-0.016667,2087,408,0,0,0,408,0,0,0,2012-05-30 17:00,,,2012-05-30 16:59,2012-07-20 16:59,,2012-05-31 08:00,2012-07-20 17:00,2012-05-31 08:00,2012-07-20 17:00,2012-05-31 08:00,2012-07-20 17:00,,2012-05-30 16:59,2012-07-20 16:59,CS_MSO,PT_Normal,,,,,86eriEi1z0eQPQy6QqWnaw,tjm2mx2cUUyxd/Z8deMfQA,,,N,0,0,,,2012-06-20 11:04,2012-06-20 11:04,admin,admin,,,
578,83695,772,10530,841,0,0,N,N,N,CP_Drtn,TT_FinMile,DT_FixedDrtn,RV_OK,TK_NotStart,GM71,Reciving Fax of Award,,-0.016667,0,0,0,0,0,0,0,0,0,2012-01-20 16:00,,,2012-01-19 16:00,2012-01-19 16:00,,2012-01-21 08:01,2012-01-21 08:01,2012-01-21 08:01,2012-01-21 08:01,2012-01-21 08:01,2012-01-21 08:01,,2012-01-19 16:00,2012-01-19 16:00,CS_MEO,PT_Normal,,,,,T8LRfxeHhk6BaU8fXBtCzg,QntCRO6hKk2dGYdaC4jC+A,,,N,0,0,,,2012-06-20 11:04,2012-06-20 11:04,admin,admin,,,
579,83696,772,10530,841,0,0,N,N,N,CP_Drtn,TT_Mile,DT_FixedDrtn,RV_OK,TK_NotStart,GM72,Project Fab. Start,,1951.983333,1952,0,0,0,0,0,0,0,0,,,,2013-04-07 15:59,2013-04-07 15:59,,2012-06-13 08:00,2012-06-13 08:00,2012-06-13 08:00,2012-06-13 08:00,2012-06-13 08:00,2012-06-13 08:00,,2013-04-07 15:59,2013-04-07 15:59,,PT_Normal,,,,,brW8ig6jB0CgtktfeIBr3g,BLyTuTslCE6HWg/1RLrlRA,,,N,0,0,,,2012-06-20 11:04,2012-06-20 11:04,admin,admin,,,
580,83697,772,10530,841,0,0,N,N,N,CP_Drtn,TT_Mile,DT_FixedDrtn,RV_OK,TK_NotStart,GM74,Ready for Load out ( 02nd Shipment/ Jacket & Piles ),,208,208,0,0,0,0,0,0,0,0,,,,2013-02-25 08:00,2013-02-25 08:00,,2013-01-23 08:00,2013-01-23 08:00,2013-01-23 08:00,2013-01-23 08:00,2013-01-23 08:00,2013-01-23 08:00,,2013-02-25 08:00,2013-02-25 08:00,,PT_Normal,,,,,xdmkOGOLoE234dObtg2onQ,gFZONbWIK0C+nNXjlIz6uQ,,,N,0,0,,,2012-06-20 11:04,2012-06-20 11:04,admin,admin,,,
581,83698,772,10530,841,0,0,N,N,N,CP_Drtn,TT_Mile,DT_FixedDrtn,RV_OK,TK_NotStart,GM75,Ready for Load out ( 03rd Shipment/ Deck C/W TSF ),,55.983333,56,0,0,0,0,0,0,0,0,,,,2013-04-07 15:59,2013-04-07 15:59,,2013-03-31 08:00,2013-03-31 08:00,2013-03-31 08:00,2013-03-31 08:00,2013-03-31 08:00,2013-03-31 08:00,,2013-04-07 15:59,2013-04-07 15:59,,PT_Normal,,,,,BA2gV6Co+EmqnguyBnOEAg,9s2ympvYOEiZvw5ljG+Kxw,,,N,0,0,,,2012-06-20 11:04,2012-06-20 11:04,admin,admin,,,
582,83699,772,10530,841,0,0,N,N,N,CP_Drtn,TT_Mile,DT_FixedDrtn,RV_OK,TK_NotStart,GM73,"Ready for Load out (01st Shipment / Pipeline Spools 18"""" & 8"""")",,1119.983333,1120,0,0,0,0,0,0,0,0,,,,2013-04-07 15:59,2013-04-07 15:59,,2012-10-18 08:00,2012-10-18 08:00,2012-10-18 08:00,2012-10-18 08:00,2012-10-18 08:00,2012-10-18 08:00,,2013-04-07 15:59,2013-04-07 15:59,,PT_Normal,,,,,Y2AhzOZ6yE6WdMCRRLviOQ,6hkgSxtQukaozXDsVGKVjA,,,N,0,0,,,2012-06-20 11:04,2012-06-20 11:04,admin,admin,,,
583,83700,772,10536,794,1,0,N,N,N,CP_Drtn,TT_Task,DT_FixedDrtn,RV_OK,TK_NotStart,ENS73,Receiving Jacket Primary & Secondary Steel IFC DWG`s,,0,0,1104,0,0,0,1104,0,0,0,2011-11-30 08:01,,,2011-11-30 08:01,2012-04-16 08:01,,2011-11-30 08:01,2012-04-16 08:01,2011-11-30 08:01,2012-04-16 08:01,2011-11-30 08:01,2012-04-16 08:01,,2011-11-30 08:01,2012-04-16 08:01,CS_MSO,PT_Normal,,,,,UPzp9T3LYE60fifdzZVkqA,fQn8/D6rEUSlwSy++aYoQA,,,N,0,0,,,2012-06-20 11:04,2012-06-20 11:04,admin,admin,,,
584,83701,772,10536,794,0,0,N,N,N,CP_Drtn,TT_FinMile,DT_FixedDrtn,RV_OK,TK_NotStart,ENS74,Receiving Piles IFC DWG`s,,0,720,0,0,0,0,0,0,0,0,2012-01-17 08:01,,,2012-01-17 08:01,2012-01-17 08:01,,2012-01-17 08:01,2012-01-17 08:01,2012-01-17 08:01,2012-01-17 08:01,2012-01-17 08:01,2012-01-17 08:01,,2012-01-17 08:01,2012-01-17 08:01,CS_MEO,PT_Normal,,,,,uZrsdxsg4k6MkG2EK4/xsA,585mTWwaOUekmnE83+A1kg,,,N,0,0,,,2012-06-20 11:04,2012-06-20 11:04,admin,admin,,,
585,83702,772,10536,794,1,0,N,N,N,CP_Drtn,TT_Task,DT_FixedDUR2,RV_OK,TK_NotStart,ENS75,Receiving Deck Str. Primary & Secondary IFC DWG`s,,0,224,328,0,0,0,328,0,0,0,2012-02-07 08:01,,,2012-02-07 08:01,2012-03-19 08:01,,2012-02-07 08:01,2012-03-19 08:01,2012-02-07 08:01,2012-03-19 08:01,2012-02-07 08:01,2012-03-19 08:01,,2012-02-07 08:01,2012-03-19 08:01,CS_MSO,PT_Normal,,,,,+jA2QFzPE0OqrzJ3SwQfUQ,vDJwuFiedked97VMopq//w,,,N,0,0,,,2012-06-20 11:04,2012-06-20 11:04,admin,admin,,,
586,83703,772,10536,794,0,0,N,N,N,CP_Drtn,TT_FinMile,DT_FixedDrtn,RV_OK,TK_NotStart,ENS71,"Receiving Final Jacket , Boat Land & Piles MTO",,135.983333,135.983333,0,0,0,0,0,0,0,0,,,,2012-02-14 17:00,2012-02-14 17:00,,2012-01-29 08:01,2012-01-29 08:01,2012-01-29 08:01,2012-01-29 08:01,2012-01-29 08:01,2012-01-29 08:01,,2012-02-14 17:00,2012-02-14 17:00,,PT_Normal,,,,,A5Aog3N41EypVFjOuZE2Ow,hfJ8sj6Ai02DimJPwXbdQw,,,N,0,0,,,2012-06-20 11:04,2012-06-20 11:04,admin,admin,,,
587,83704,772,10536,794,0,0,N,N,N,CP_Drtn,TT_FinMile,DT_FixedDrtn,RV_OK,TK_NotStart,ENS72,Receiving Final Deck Str. MTO,,135.983333,135.983333,0,0,0,0,0,0,0,0,,,,2012-02-14 17:00,2012-02-14 17:00,,2012-01-29 08:01,2012-01-29 08:01,2012-01-29 08:01,2012-01-29 08:01,2012-01-29 08:01,2012-01-29 08:01,,2012-02-14 17:00,2012-02-14 17:00,,PT_Normal,,,,,hqzWQx44gkSweIqD9xp9HA,0X6GOG/si0W/k3axqY1amw,,,N,0,0,,,2012-06-20 11:04,2012-06-20 11:04,admin,admin,,,
588,83705,772,10536,794,1,0,N,N,N,CP_Drtn,TT_Task,DT_FixedDrtn,RV_OK,TK_NotStart,ENS78,Receiving IFC Equipment fixation DWG`s,,0,1559.983333,104,0,0,0,104,0,0,0,2012-04-04 08:01,,,2012-04-04 08:01,2012-04-17 08:01,,2012-04-04 08:01,2012-04-17 08:01,2012-04-04 08:01,2012-04-17 08:01,2012-04-04 08:01,2012-04-17 08:01,,2012-04-04 08:01,2012-04-17 08:01,CS_MSO,PT_Normal,,,,,4rqOxjXECE+HPr1ezxTq9g,IwC8dusvkkeoGNbz2wydyg,,,N,0,0,,,2012-06-20 11:04,2012-06-20 11:04,admin,admin,,,
589,83706,772,10536,794,1,0,N,N,N,CP_Drtn,TT_Task,DT_FixedDUR2,RV_OK,TK_NotStart,ENS76,Receiving Piping Supports IFC DWG's,,0,3078.983333,160,0,0,0,160,0,0,0,2012-02-28 08:01,,,2012-02-28 08:01,2012-03-19 08:01,,2012-02-28 08:01,2012-03-19 08:01,2012-02-28 08:01,2012-03-19 08:01,2012-02-28 08:01,2012-03-19 08:01,,2012-02-28 08:01,2012-03-19 08:01,CS_MSO,PT_Normal,,,,,hbpZAcsSb0qwaxgD/GSPrg,fwqWJuI73UKeEIb3GJFIaA,,,N,0,0,,,2012-06-20 11:04,2012-06-20 11:04,admin,admin,,,
590,83707,772,10536,794,1,0,N,N,N,CP_Drtn,TT_Task,DT_FixedDUR2,RV_OK,TK_NotStart,ENS77,Receiving Cable tarys Support IFC DWG's,,0,3022.983333,104,0,0,0,104,0,0,0,2012-03-13 08:01,,,2012-03-13 08:01,2012-03-26 08:01,,2012-03-13 08:01,2012-03-26 08:01,2012-03-13 08:01,2012-03-26 08:01,2012-03-13 08:01,2012-03-26 08:01,,2012-03-13 08:01,2012-03-26 08:01,CS_MSO,PT_Normal,,,,,+nAWEL4pMkyOrIanTWyxsA,uubwd56Wz0KTSuLtYlidjg,,,N,0,0,,,2012-06-20 11:04,2012-06-20 11:04,admin,admin,,,
591,83708,772,10536,794,1,0,N,N,N,CP_Drtn,TT_Task,DT_FixedDrtn,RV_OK,TK_NotStart,ENS79,"Receiving P/L 8"""" & 18"""" IFC DWG's",,0,2736,160,0,0,0,160,0,0,0,2012-04-10 16:00,,,2012-04-10 16:00,2012-04-30 16:00,,2012-04-10 16:00,2012-04-30 16:00,2012-04-10 16:00,2012-04-30 16:00,2012-04-10 16:00,2012-04-30 16:00,,2012-04-10 16:00,2012-04-30 16:00,CS_MSO,PT_Normal,,,,,37NYqoULrEuwQVOgm9zrHw,oIVfzDIEhEGkQBAOSFzBdQ,,,N,0,0,,,2012-06-20 11:04,2012-06-20 11:04,admin,admin,,,
592,83709,772,10537,794,1,0,N,N,N,CP_Drtn,TT_Task,DT_FixedDrtn,RV_OK,TK_NotStart,ENT73,Receiving Piping ISO`s IFC DWG's,,0,1047.983333,112,0,0,0,112,0,0,0,2012-02-27 08:01,,,2012-02-27 08:01,2012-03-12 08:01,,2012-02-27 08:01,2012-03-12 08:01,2012-02-27 08:01,2012-03-12 08:01,2012-02-27 08:01,2012-03-12 08:01,,2012-02-27 08:01,2012-03-12 08:01,CS_MSO,PT_Normal,,,,,WizJ10k4CU+9GmVaiaE7Uw,EbAV7O3+0UWzxWiIdkWuwA,,,N,0,0,,,2012-06-20 11:04,2012-06-20 11:04,admin,admin,,,
593,83710,772,10537,794,0,0,N,N,N,CP_Drtn,TT_FinMile,DT_FixedDrtn,RV_OK,TK_NotStart,ENT71,Issue Approved P&ID's / Equipment List IFC DWG's,,0,3584,0,0,0,0,0,0,0,0,2012-01-15 16:00,,,2012-01-15 16:00,2012-01-15 16:00,,2012-01-15 16:00,2012-01-15 16:00,2012-01-15 16:00,2012-01-15 16:00,2012-01-15 16:00,2012-01-15 16:00,,2012-01-15 16:00,2012-01-15 16:00,CS_MEO,PT_Normal,,,,,XrCypkrBFU2CQfcckjYmvQ,aW4hUSQwQkyC6xUGkTqBNw,,,N,0,0,,,2012-06-20 11:04,2012-06-20 11:04,admin,admin,,,
594,83711,772,10537,794,0,0,N,N,N,CP_Drtn,TT_FinMile,DT_FixedDrtn,RV_OK,TK_NotStart,ENT72,Issue plat plans IFC DWG's,,0,3408,0,0,0,0,0,0,0,0,2012-02-06 16:00,,,2012-02-06 16:00,2012-02-06 16:00,,2012-02-06 16:00,2012-02-06 16:00,2012-02-06 16:00,2012-02-06 16:00,2012-02-06 16:00,2012-02-06 16:00,,2012-02-06 16:00,2012-02-06 16:00,CS_MEO,PT_Normal,,,,,8EV20Zw+yUKWAa1pV0PzIQ,BK+nLP810UCbJMC0LPk30g,,,N,0,0,,,2012-06-20 11:04,2012-06-20 11:04,admin,admin,,,
595,83712,772,10537,841,0,0,N,N,N,CP_Drtn,TT_FinMile,DT_FixedDrtn,RV_OK,TK_NotStart,ENT74,Issue Hydrotest maps & loops IFC DWG's,,0,2648,0,0,0,0,0,0,0,0,2012-02-28 16:00,,,2012-02-28 16:00,2012-02-28 16:00,,2012-02-28 16:00,2012-02-28 16:00,2012-02-28 16:00,2012-02-28 16:00,2012-02-28 16:00,2012-02-28 16:00,,2012-02-28 16:00,2012-02-28 16:00,CS_MEO,PT_Normal,,,,,wGWYeMjF3EWh1q3hjGVX/Q,fHwgfAMtLECZ5IJXBmoKbw,,,N,0,0,,,2012-06-20 11:04,2012-06-20 11:04,admin,admin,,,
596,83713,772,10538,794,1,0,N,N,N,CP_Drtn,TT_Task,DT_FixedDUR2,RV_OK,TK_NotStart,ENE71,Receiving E&I IFC DWG`s,,0,2279.983333,776,0,0,0,776,0,0,0,2012-01-23 08:01,,,2012-01-23 08:01,2012-04-29 08:01,,2012-01-23 08:01,2012-04-29 08:01,2012-01-23 08:01,2012-04-29 08:01,2012-01-23 08:01,2012-04-29 08:01,,2012-01-23 08:01,2012-04-29 08:01,CS_MSO,PT_Normal,,,,,NJY0VUFQhECpi2fzZ9ww9g,PBmCenI7YEKLp6iD84Cr7Q,,,N,0,0,,,2012-06-20 11:04,2012-06-20 11:04,admin,admin,,,
597,83714,772,10532,841,1,0,N,N,N,CP_Drtn,TT_Task,DT_FixedDUR2,RV_OK,TK_NotStart,PF71,Pre-Fabrication of Steel Structure ( Jacket & Piles),,208,0,960,0,0,0,960,0,0,0,,,,2012-07-14 08:00,2012-12-10 16:00,,2012-06-13 08:00,2012-11-08 16:00,2012-06-13 08:00,2012-11-08 16:00,2012-06-13 08:00,2012-11-08 16:00,,2012-07-14 08:00,2012-12-10 16:00,,PT_Normal,,,,,vzU/HlZTZEKvv2QECJRSXQ,BXGh6gKxm0iB+B+N2Cm2ag,,,N,0,0,,,2012-06-20 11:04,2012-06-20 11:04,admin,admin,,,
598,83715,772,10539,794,1,0,N,N,N,CP_Drtn,TT_Task,DT_FixedDUR2,RV_OK,TK_NotStart,PRT141,Piping Bulk material 1st batch,,-0.016667,536,240,0,0,0,240,0,0,0,2012-05-07 17:00,,,2012-05-07 16:59,2012-06-06 16:59,,2012-05-08 08:00,2012-06-06 17:00,2012-05-08 08:00,2012-06-06 17:00,2012-05-08 08:00,2012-06-06 17:00,,2012-05-07 16:59,2012-06-06 16:59,CS_MSO,PT_Normal,,,,,klvunX9Xz0+8tf6Ab87Sdw,mlVZd8jlMk6fm6lMahemSA,,,N,0,0,,,2012-06-20 11:04,2012-06-20 11:04,admin,admin,,,
599,83716,772,10539,794,1,0,N,N,N,CP_Drtn,TT_Task,DT_FixedDUR2,RV_OK,TK_NotStart,PRT142,Piping Bulk material 2nd batch,,-0.016667,855,240,0,0,0,240,0,0,0,2012-06-10 17:00,,,2012-06-10 16:59,2012-07-10 16:59,,2012-06-11 08:00,2012-07-10 17:00,2012-06-11 08:00,2012-07-10 17:00,2012-06-11 08:00,2012-07-10 17:00,,2012-06-10 16:59,2012-07-10 16:59,CS_MSO,PT_Normal,,,,,RDk2bMRXnkui26SsUQEfVQ,XSjOeWLmc0Suy1GGlTLASQ,,,N,0,0,,,2012-06-20 11:04,2012-06-20 11:04,admin,admin,,,
600,83717,772,10539,794,1,0,N,N,N,CP_Drtn,TT_Task,DT_FixedDUR2,RV_OK,TK_NotStart,PRT73,Piping Valves Bulk material 1st batch,,-0.016667,999,112,0,0,0,112,0,0,0,2012-06-23 17:00,,,2012-06-23 16:59,2012-07-07 16:59,,2012-06-24 08:00,2012-07-07 17:00,2012-06-24 08:00,2012-07-07 17:00,2012-06-24 08:00,2012-07-07 17:00,,2012-06-23 16:59,2012-07-07 16:59,CS_MSO,PT_Normal,,,,,u5ibbwq7SUK1wW8mqOayQQ,mQTrdmlAckeihDmyjty0yw,,,N,0,0,,,2012-06-20 11:04,2012-06-20 11:04,admin,admin,,,
601,83718,772,10539,794,1,0,N,N,N,CP_Drtn,TT_Task,DT_FixedDUR2,RV_OK,TK_NotStart,PRT74,Piping valves Bulk material 2nd batch,,-0.016667,767,112,0,0,0,112,0,0,0,2012-07-22 17:00,,,2012-07-22 16:59,2012-08-05 16:59,,2012-07-23 08:00,2012-08-05 17:00,2012-07-23 08:00,2012-08-05 17:00,2012-07-23 08:00,2012-08-05 17:00,,2012-07-22 16:59,2012-08-05 16:59,CS_MSO,PT_Normal,,,,,7VTNxnKF20aZxP2cDTfZxQ,XYLgLhVz1EisgV8ctlneGw,,,N,0,0,,,2012-06-20 11:04,2012-06-20 11:04,admin,admin,,,
602,83719,772,10539,794,1,0,N,N,N,CP_Drtn,TT_Task,DT_FixedDUR2,RV_OK,TK_NotStart,PRT75,Flanges,,-0.016667,8,360,0,0,0,360,0,0,0,2012-07-13 17:00,,,2012-07-13 16:59,2012-08-27 16:59,,2012-07-14 08:00,2012-08-27 17:00,2012-07-14 08:00,2012-08-27 17:00,2012-07-14 08:00,2012-08-27 17:00,,2012-07-13 16:59,2012-08-27 16:59,CS_MSO,PT_Normal,,,,,/EEoSlQ7H022x5XPvNIPfQ,ynw/2kVsJUCQTiDjWuiUKg,,,N,0,0,,,2012-06-20 11:04,2012-06-20 11:04,admin,admin,,,
603,83720,772,10539,794,1,0,N,N,N,CP_Drtn,TT_Task,DT_FixedDUR2,RV_OK,TK_NotStart,PRT76,Pressure Safety Valve,,-0.016667,1519,352,0,0,0,352,0,0,0,2012-06-04 17:00,,,2012-06-04 16:59,2012-07-18 16:59,,2012-06-05 08:00,2012-07-18 17:00,2012-06-05 08:00,2012-07-18 17:00,2012-06-05 08:00,2012-07-18 17:00,,2012-06-04 16:59,2012-07-18 16:59,CS_MSO,PT_Normal,,,,,iBos/NcZTUa5hpBGqwqdNw,FmcfYmS0CkqRp6Gvxanm2A,,,N,0,0,,,2012-06-20 11:04,2012-06-20 11:04,admin,admin,,,
604,83721,772,10539,794,1,0,N,N,N,CP_Drtn,TT_Task,DT_FixedDUR2,RV_OK,TK_NotStart,PRT77,Pressure regulator Valve,,-0.016667,1231,240,0,0,0,240,0,0,0,2012-07-24 17:00,,,2012-07-24 16:59,2012-08-23 16:59,,2012-07-25 08:00,2012-08-23 17:00,2012-07-25 08:00,2012-08-23 17:00,2012-07-25 08:00,2012-08-23 17:00,,2012-07-24 16:59,2012-08-23 16:59,CS_MSO,PT_Normal,,,,,nTAghZVJeEKGj5zkhL7WHw,MUMBakw88UCMBwfosGhvtA,,,N,0,0,,,2012-06-20 11:05,2012-06-20 11:05,admin,admin,,,
605,83722,772,10539,794,1,0,N,N,N,CP_Drtn,TT_Task,DT_FixedDUR2,RV_OK,TK_NotStart,PRT78,Shutdown Valve,,-0.016667,1135,248,0,0,0,248,0,0,0,2012-08-04 17:00,,,2012-08-04 16:59,2012-09-04 16:59,,2012-08-05 08:00,2012-09-04 17:00,2012-08-05 08:00,2012-09-04 17:00,2012-08-05 08:00,2012-09-04 17:00,,2012-08-04 16:59,2012-09-04 16:59,CS_MSO,PT_Normal,,,,,8RmlgAmU50+EN/cK/oUKCg,3HVeZrPw+kua3HhPYoeooQ,,,N,0,0,,,2012-06-20 11:05,2012-06-20 11:05,admin,admin,,,
606,83723,772,10540,794,1,0,N,N,N,CP_Drtn,TT_Task,DT_FixedDUR2,RV_OK,TK_NotStart,PRT79,Chemical Injection PKG.,,-0.016667,1264,360,0,0,0,360,0,0,0,2012-05-08 17:00,,,2012-05-08 16:59,2012-06-22 16:59,,2012-05-09 08:00,2012-06-22 17:00,2012-05-09 08:00,2012-06-22 17:00,2012-05-09 08:00,2012-06-22 17:00,,2012-05-08 16:59,2012-06-22 16:59,CS_MSO,PT_Normal,,,,,sQ0ldfo0V0yamrvy1xwhXA,atgCRGby9EyY4hjcV3KVMw,,,N,0,0,,,2012-06-20 11:05,2012-06-20 11:05,admin,admin,,,
607,83724,772,10540,794,1,0,N,N,N,CP_Drtn,TT_Task,DT_FixedDUR2,RV_OK,TK_NotStart,PRT80,Launcher recivier,,-0.016667,960,360,0,0,0,360,0,0,0,2012-06-15 17:00,,,2012-06-15 16:59,2012-07-30 16:59,,2012-06-16 08:00,2012-07-30 17:00,2012-06-16 08:00,2012-07-30 17:00,2012-06-16 08:00,2012-07-30 17:00,,2012-06-15 16:59,2012-07-30 16:59,CS_MSO,PT_Normal,,,,,EopiKclYKka/xCYA01ysAA,EKOmDBP6cEq6EOVl5NB3WA,,,N,0,0,,,2012-06-20 11:05,2012-06-20 11:05,admin,admin,,,
608,83725,772,10540,794,1,0,N,N,N,CP_Drtn,TT_Task,DT_FixedDUR2,RV_OK,TK_NotStart,PRT151,Vent KOD,,-0.016667,864,360,0,0,0,360,0,0,0,2012-06-27 17:00,,,2012-06-27 16:59,2012-08-11 16:59,,2012-06-28 08:00,2012-08-11 17:00,2012-06-28 08:00,2012-08-11 17:00,2012-06-28 08:00,2012-08-11 17:00,,2012-06-27 16:59,2012-08-11 16:59,CS_MSO,PT_Normal,,,,,9jkYEPhTlEuXWuiKqhCTDA,rf+Er5qWCU2Vl8wE317jGQ,,,N,0,0,,,2012-06-20 11:05,2012-06-20 11:05,admin,admin,,,
609,83726,772,10540,794,1,0,N,N,N,CP_Drtn,TT_Task,DT_FixedDUR2,RV_OK,TK_NotStart,PRT152,Open Drain Tank,,-0.016667,624,360,0,0,0,360,0,0,0,2012-06-27 17:00,,,2012-06-27 16:59,2012-08-11 16:59,,2012-06-28 08:00,2012-08-11 17:00,2012-06-28 08:00,2012-08-11 17:00,2012-06-28 08:00,2012-08-11 17:00,,2012-06-27 16:59,2012-08-11 16:59,CS_MSO,PT_Normal,,,,,8w6CuE+0AkmI0XdVJISHBg,QEatGDsWyEC05CbcxV4PSA,,,N,0,0,,,2012-06-20 11:05,2012-06-20 11:05,admin,admin,,,
610,83727,772,10541,794,1,0,N,N,N,CP_Drtn,TT_Task,DT_FixedDUR2,RV_OK,TK_NotStart,PRS73,Delivery of Structure Material (F.O.B - 13 Wks.) - (Gupco Responsability),,0,0,728,0,0,0,728,0,0,0,,,,2012-02-15 08:00,2012-05-15 17:00,,2012-02-15 08:00,2012-05-15 17:00,2012-02-15 08:00,2012-05-15 17:00,2012-02-15 08:00,2012-05-15 17:00,,2012-02-15 08:00,2012-05-15 17:00,,PT_Normal,,,,,icr9QCgqaU+o8S/YJ7joCw,ufROFkTcoEuCgCWoyMhxDg,,,Y,0,0,,,2012-06-20 11:05,2012-06-20 11:05,admin,admin,,,
611,83728,772,10541,794,1,0,N,N,N,CP_Drtn,TT_Task,DT_FixedDUR2,RV_OK,TK_NotStart,PRS75,Material check with IFC DWG's to Prepare balance material,,1566.983333,0,56,0,0,0,56,0,0,0,,,,2012-10-28 16:00,2012-11-04 16:00,,2012-04-16 08:01,2012-04-23 08:01,2012-04-16 08:01,2012-04-23 08:01,2012-04-16 08:01,2012-04-23 08:01,,2012-10-28 16:00,2012-11-04 16:00,,PT_Normal,,,,,C3EBA+6+w0qviyYjFTwMVA,WHf9ahQtqU2p9l32LH4nFg,,,N,0,0,,,2012-06-20 11:05,2012-06-20 11:05,admin,admin,,,
612,83729,772,10541,794,1,0,N,N,N,CP_Drtn,TT_Task,DT_FixedDUR2,RV_OK,TK_NotStart,PRS76,Delivery of balance material,,1566.983333,1566.983333,1232,0,0,0,1232,0,0,0,,,,2012-11-04 16:00,2013-04-07 16:00,,2012-04-23 08:01,2012-09-24 08:01,2012-04-23 08:01,2012-09-24 08:01,2012-04-23 08:01,2012-09-24 08:01,,2012-11-04 16:00,2013-04-07 16:00,,PT_Normal,,,,,mVAGZsAMZEWgYzWb+p9Nbw,qqmATIO3T0mle0HolK/t5g,,,N,0,0,,,2012-06-20 11:05,2012-06-20 11:05,admin,admin,,,
613,83730,772,10541,794,0,0,N,N,N,CP_Drtn,TT_Mile,DT_FixedDrtn,RV_OK,TK_NotStart,PRS71,Issue Structural Material P.O's ( Gupco Responsability),,0,64,0,0,0,0,0,0,0,0,2012-02-07 08:00,,,2012-02-07 08:00,2012-02-07 08:00,,2012-02-07 08:00,2012-02-07 08:00,2012-02-07 08:00,2012-02-07 08:00,2012-02-07 08:00,2012-02-07 08:00,,2012-02-07 08:00,2012-02-07 08:00,CS_MSO,PT_Normal,,,,,iMVqIAlvy06VOUqePee/8g,pHgYmay3DEa6F1CjhdcYlQ,,,N,0,0,,,2012-06-20 11:05,2012-06-20 11:05,admin,admin,,,
614,83731,772,10541,794,0,0,N,N,N,CP_Drtn,TT_Mile,DT_FixedDrtn,RV_OK,TK_NotStart,PRS72,Issue LC ( Gupco Responsability),,0,0,0,0,0,0,0,0,0,0,2012-02-15 08:00,,,2012-02-15 08:00,2012-02-15 08:00,,2012-02-15 08:00,2012-02-15 08:00,2012-02-15 08:00,2012-02-15 08:00,2012-02-15 08:00,2012-02-15 08:00,,2012-02-15 08:00,2012-02-15 08:00,CS_MSO,PT_Normal,,,,,Kma0RvSAWkKb13s9MigFaA,veFibYaEtEavYsz0ENZ8Xw,,,Y,0,0,,,2012-06-20 11:05,2012-06-20 11:05,admin,admin,,,
615,83732,772,10541,794,1,0,N,N,N,CP_Drtn,TT_Task,DT_FixedDUR2,RV_OK,TK_NotStart,PRS74,Delivery of Structure Material at Site (4 Wks.),,0,0,224,0,0,0,224,0,0,0,,,,2012-05-16 08:00,2012-06-12 17:00,,2012-05-16 08:00,2012-06-12 17:00,2012-05-16 08:00,2012-06-12 17:00,2012-05-16 08:00,2012-06-12 17:00,,2012-05-16 08:00,2012-06-12 17:00,,PT_Normal,,,,,05Tfgi8oUUKIS2FcBHLm0A,nRJYaZzK+UG2EPxNOD2G8g,,,Y,0,0,,,2012-06-20 11:05,2012-06-20 11:05,admin,admin,,,
616,83733,772,10542,794,1,0,N,N,N,CP_Drtn,TT_Task,DT_FixedDrtn,RV_OK,TK_NotStart,PRP71,"Pipeline 18"""" & Fittings",,0,0,408,0,0,0,408,0,0,0,2012-05-31 08:00,,,2012-05-31 08:00,2012-07-20 17:00,,2012-05-31 08:00,2012-07-20 17:00,2012-05-31 08:00,2012-07-20 17:00,2012-05-31 08:00,2012-07-20 17:00,,2012-05-31 08:00,2012-07-20 17:00,CS_MSO,PT_Normal,,,,,32yiZ1X5E0qGm05nIpWP4g,0gQPSnx6fE6L7wIm15puCg,,,N,0,0,,,2012-06-20 11:05,2012-06-20 11:05,admin,admin,,,
617,83734,772,10542,794,1,0,N,N,N,CP_Drtn,TT_Task,DT_FixedDrtn,RV_OK,TK_NotStart,PRP142,"Pipeline 8"""" & Fittings",,-0.016667,351,408,0,0,0,408,0,0,0,2012-05-30 17:00,,,2012-05-30 16:59,2012-07-20 16:59,,2012-05-31 08:00,2012-07-20 17:00,2012-05-31 08:00,2012-07-20 17:00,2012-05-31 08:00,2012-07-20 17:00,,2012-05-30 16:59,2012-07-20 16:59,CS_MSO,PT_Normal,,,,,QYVhN+RQ2E+7LOktFt0f/A,AxWyZ9p3n0Oi1nGfbffvUg,,,N,0,0,,,2012-06-20 11:05,2012-06-20 11:05,admin,admin,,,
618,83735,772,10552,794,1,0,N,N,N,CP_Drtn,TT_Task,DT_FixedDUR2,RV_OK,TK_NotStart,PRE77,Radar system,,-0.016667,904,240,0,0,0,240,0,0,0,2012-06-19 17:00,,,2012-06-19 16:59,2012-07-19 16:59,,2012-06-20 08:00,2012-07-19 17:00,2012-06-20 08:00,2012-07-19 17:00,2012-06-20 08:00,2012-07-19 17:00,,2012-06-19 16:59,2012-07-19 16:59,CS_MSO,PT_Normal,,,,,nQxqflhZsE2PVceUogGieA,ZwOgBmKoj0abTWYrf+cpXQ,,,N,0,0,,,2012-06-20 11:05,2012-06-20 11:05,admin,admin,,,
619,83736,772,10552,794,1,0,N,N,N,CP_Drtn,TT_Task,DT_FixedDUR2,RV_OK,TK_NotStart,PRE78,Navegation Aids,,-0.016667,1384,360,0,0,0,360,0,0,0,2012-04-05 17:00,,,2012-04-05 16:59,2012-05-20 16:59,,2012-04-06 08:00,2012-05-20 17:00,2012-04-06 08:00,2012-05-20 17:00,2012-04-06 08:00,2012-05-20 17:00,,2012-04-05 16:59,2012-05-20 16:59,CS_MSO,PT_Normal,,,,,EITGvIS//0icTchNLL6+jw,AdPCWeKs9Eu/XKLAjtX/xg,,,N,0,0,,,2012-06-20 11:05,2012-06-20 11:05,admin,admin,,,
620,83737,772,10553,794,1,0,N,N,N,CP_Drtn,TT_Task,DT_FixedDUR2,RV_OK,TK_NotStart,PRE141,Electrical Bulks,,-0.016667,512,360,0,0,0,360,0,0,0,2012-07-23 17:00,,,2012-07-23 16:59,2012-09-06 16:59,,2012-07-24 08:00,2012-09-06 17:00,2012-07-24 08:00,2012-09-06 17:00,2012-07-24 08:00,2012-09-06 17:00,,2012-07-23 16:59,2012-09-06 16:59,CS_MSO,PT_Normal,,,,,ynKNujxxkkONfVT4q57Auw,WXLNpk9sVEuqCcpSKWeHsQ,,,N,0,0,,,2012-06-20 11:05,2012-06-20 11:05,admin,admin,,,
621,83738,772,10553,794,1,0,N,N,N,CP_Drtn,TT_Task,DT_FixedDUR2,RV_OK,TK_NotStart,PRE142,Cathodic Protection,,-0.016667,1000,360,0,0,0,360,0,0,0,2012-05-23 17:00,,,2012-05-23 16:59,2012-07-07 16:59,,2012-05-24 08:00,2012-07-07 17:00,2012-05-24 08:00,2012-07-07 17:00,2012-05-24 08:00,2012-07-07 17:00,,2012-05-23 16:59,2012-07-07 16:59,CS_MSO,PT_Normal,,,,,QbmC8hf+pUKvjPnmdo6p/A,rBAMXE1Xckm5NRjyKElk1A,,,N,0,0,,,2012-06-20 11:05,2012-06-20 11:05,admin,admin,,,
622,83739,772,10553,794,1,0,N,N,N,CP_Drtn,TT_Task,DT_FixedDUR2,RV_OK,TK_NotStart,PRE143,Solar Power,,-0.016667,912,360,0,0,0,360,0,0,0,2012-06-03 17:00,,,2012-06-03 16:59,2012-07-18 16:59,,2012-06-04 08:00,2012-07-18 17:00,2012-06-04 08:00,2012-07-18 17:00,2012-06-04 08:00,2012-07-18 17:00,,2012-06-03 16:59,2012-07-18 16:59,CS_MSO,PT_Normal,,,,,uDf5+IGFzECAklLNSK0VkA,224lD4coJkG9lmldOcMgGw,,,N,0,0,,,2012-06-20 11:05,2012-06-20 11:05,admin,admin,,,
623,83740,772,10550,794,1,0,N,N,N,CP_Drtn,TT_Task,DT_FixedDUR2,RV_OK,TK_NotStart,PRE74,F&G Detector,,-0.016667,648,360,0,0,0,360,0,0,0,2012-07-06 17:00,,,2012-07-06 16:59,2012-08-20 16:59,,2012-07-07 08:00,2012-08-20 17:00,2012-07-07 08:00,2012-08-20 17:00,2012-07-07 08:00,2012-08-20 17:00,,2012-07-06 16:59,2012-08-20 16:59,CS_MSO,PT_Normal,,,,,h3jjVw4Zbk6qWZdwvz6ScA,GNiZoWepJkyQLU1cno9RoA,,,N,0,0,,,2012-06-20 11:05,2012-06-20 11:05,admin,admin,,,
624,83741,772,10550,794,1,0,N,N,N,CP_Drtn,TT_Task,DT_FixedDUR2,RV_OK,TK_NotStart,PRE75,Fire fighting system,,-0.016667,720,360,0,0,0,360,0,0,0,2012-06-27 17:00,,,2012-06-27 16:59,2012-08-11 16:59,,2012-06-28 08:00,2012-08-11 17:00,2012-06-28 08:00,2012-08-11 17:00,2012-06-28 08:00,2012-08-11 17:00,,2012-06-27 16:59,2012-08-11 16:59,CS_MSO,PT_Normal,,,,,7PU8oSYS60yNw8u7WDpZVw,A2Ms5fr0LkmjeEO9wddbSw,,,N,0,0,,,2012-06-20 11:05,2012-06-20 11:05,admin,admin,,,
625,83742,772,10550,794,1,0,N,N,N,CP_Drtn,TT_Task,DT_FixedDUR2,RV_OK,TK_NotStart,PRE76,Life Saving Equipment,,-0.016667,664,360,0,0,0,360,0,0,0,2012-07-04 17:00,,,2012-07-04 16:59,2012-08-18 16:59,,2012-07-05 08:00,2012-08-18 17:00,2012-07-05 08:00,2012-08-18 17:00,2012-07-05 08:00,2012-08-18 17:00,,2012-07-04 16:59,2012-08-18 16:59,CS_MSO,PT_Normal,,,,,pKycbftOfkixB++IjPtdrw,ldIBOpgah0a/lR8E0LDWiA,,,N,0,0,,,2012-06-20 11:05,2012-06-20 11:05,admin,admin,,,
626,83743,772,10551,794,1,0,N,N,N,CP_Drtn,TT_Task,DT_FixedDUR2,RV_OK,TK_NotStart,PRE79,Instrument Electical Bulk,,-0.016667,624,240,0,0,0,240,0,0,0,2012-07-24 17:00,,,2012-07-24 16:59,2012-08-23 16:59,,2012-07-25 08:00,2012-08-23 17:00,2012-07-25 08:00,2012-08-23 17:00,2012-07-25 08:00,2012-08-23 17:00,,2012-07-24 16:59,2012-08-23 16:59,CS_MSO,PT_Normal,,,,,l5gJ8RlIwEu1KN2pl65F1Q,ZOlQpD0j6k2Oje25cdeLIw,,,N,0,0,,,2012-06-20 11:05,2012-06-20 11:05,admin,admin,,,
627,83744,772,10551,794,1,0,N,N,N,CP_Drtn,TT_Task,DT_FixedDUR2,RV_OK,TK_NotStart,PRE80,Instrument Mechanical Bulk,,-0.016667,640,280,0,0,0,280,0,0,0,2012-07-17 17:00,,,2012-07-17 16:59,2012-08-21 16:59,,2012-07-18 08:00,2012-08-21 17:00,2012-07-18 08:00,2012-08-21 17:00,2012-07-18 08:00,2012-08-21 17:00,,2012-07-17 16:59,2012-08-21 16:59,CS_MSO,PT_Normal,,,,,FRPeWxVYJEupOdwtMQNwfg,CONbT0M6vUqQSnyT17w0og,,,N,0,0,,,2012-06-20 11:05,2012-06-20 11:05,admin,admin,,,
628,83745,772,10551,794,1,0,N,N,N,CP_Drtn,TT_Task,DT_FixedDUR2,RV_OK,TK_NotStart,PRE151,Field Instrument,,-0.016667,760,360,0,0,0,360,0,0,0,2012-06-22 17:00,,,2012-06-22 16:59,2012-08-06 16:59,,2012-06-23 08:00,2012-08-06 17:00,2012-06-23 08:00,2012-08-06 17:00,2012-06-23 08:00,2012-08-06 17:00,,2012-06-22 16:59,2012-08-06 16:59,CS_MSO,PT_Normal,,,,,pY/bZYXPT0q4p3VnjIX2Rw,w5X6gbh04UW3W5Wq+rSQBg,,,N,0,0,,,2012-06-20 11:05,2012-06-20 11:05,admin,admin,,,
629,83746,772,10551,794,1,0,N,N,N,CP_Drtn,TT_Task,DT_FixedDUR2,RV_OK,TK_NotStart,PRE152,multi phase flow meter,,-0.016667,1095,456,0,0,0,456,0,0,0,2012-07-17 17:00,,,2012-07-17 16:59,2012-09-12 16:59,,2012-07-18 08:00,2012-09-12 17:00,2012-07-18 08:00,2012-09-12 17:00,2012-07-18 08:00,2012-09-12 17:00,,2012-07-17 16:59,2012-09-12 16:59,CS_MSO,PT_Normal,,,,,Yz5IV3vHnUOZokiXp41ckw,uuNDwlD4PUKH8xd4UATKSA,,,N,0,0,,,2012-06-20 11:05,2012-06-20 11:05,admin,admin,,,
630,83747,772,10551,794,1,0,N,N,N,CP_Drtn,TT_Task,DT_FixedDUR2,RV_OK,TK_NotStart,PRE153,Safe Guard system,,-0.016667,1063,240,0,0,0,240,0,0,0,2012-08-17 17:00,,,2012-08-17 16:59,2012-09-16 16:59,,2012-08-18 08:00,2012-09-16 17:00,2012-08-18 08:00,2012-09-16 17:00,2012-08-18 08:00,2012-09-16 17:00,,2012-08-17 16:59,2012-09-16 16:59,CS_MSO,PT_Normal,,,,,cLvqzkvqh0ivFdnVqy8nQA,itaIeWskBUuoh6CM3axILA,,,N,0,0,,,2012-06-20 11:05,2012-06-20 11:05,admin,admin,,,
631,83748,772,10543,841,1,0,N,N,N,CP_Drtn,TT_Task,DT_FixedDUR2,RV_OK,TK_NotStart,JK71,"Jacket , Boat Landing Fabrication & Painting",,208,0,1400,0,0,0,1400,0,0,0,,,,2012-07-22 08:00,2013-02-24 16:00,,2012-06-21 08:00,2013-01-22 16:00,2012-06-21 08:00,2013-01-22 16:00,2012-06-21 08:00,2013-01-22 16:00,,2012-07-22 08:00,2013-02-24 16:00,,PT_Normal,,,,,0+h43kf4s06Eds69Sns1Zg,zGKHlJO9h0ufFBInYTxRrA,,,N,0,0,,,2012-06-20 11:05,2012-06-20 11:05,admin,admin,,,
632,83749,772,10543,841,1,0,N,N,N,CP_Drtn,TT_Task,DT_FixedDUR2,RV_OK,TK_NotStart,JK72,Piles Fabrication & Marking,,592,592,1000,0,0,0,1000,0,0,0,,,,2012-11-08 08:00,2013-04-07 16:00,,2012-08-06 08:00,2013-01-08 16:00,2012-08-06 08:00,2013-01-08 16:00,2012-08-06 08:00,2013-01-08 16:00,,2012-11-08 08:00,2013-04-07 16:00,,PT_Normal,,,,,4quqBfc9zkmnwmgcjT4LMQ,8yP1p3vGb0C5fjxlQvUcfw,,,N,0,0,,,2012-06-20 11:05,2012-06-20 11:05,admin,admin,,,
633,83750,772,10554,841,1,0,N,N,N,CP_Drtn,TT_Task,DT_FixedDUR2,RV_OK,TK_NotStart,DS081,Fabrication and Painting of Below Production Deck/Legs,,0,0,840,0,0,0,840,0,0,0,,,,2012-06-13 08:00,2012-10-18 16:00,,2012-06-13 08:00,2012-10-18 16:00,2012-06-13 08:00,2012-10-18 16:00,2012-06-13 08:00,2012-10-18 16:00,,2012-06-13 08:00,2012-10-18 16:00,,PT_Normal,,,,,t7AzxvhRR0mipWsYucepaA,h/MVry+KeEKwqKSfSZZSbA,,,Y,0,0,,,2012-06-20 11:05,2012-06-20 11:05,admin,admin,,,
634,83751,772,10554,841,1,0,N,N,N,CP_Drtn,TT_Task,DT_FixedDUR2,RV_OK,TK_NotStart,DS082,Fabrication and Painting of Production Deck,,0,0,960,0,0,0,960,0,0,0,,,,2012-06-13 08:00,2012-11-08 16:00,,2012-06-13 08:00,2012-11-08 16:00,2012-06-13 08:00,2012-11-08 16:00,2012-06-13 08:00,2012-11-08 16:00,,2012-06-13 08:00,2012-11-08 16:00,,PT_Normal,,,,,kv1jJP7JRkuPJOIhoAuE6w,PtBKaXvQuUSuBlQPpQvcgw,,,Y,0,0,,,2012-06-20 11:05,2012-06-20 11:05,admin,admin,,,
635,83752,772,10554,841,1,0,N,N,N,CP_Drtn,TT_Task,DT_FixedDUR2,RV_OK,TK_NotStart,DS083,Fabrication and Paint of Heli-Deck ( & Lifting if Required),,400,0,960,0,0,0,960,0,0,0,,,,2012-10-29 08:00,2013-03-21 16:00,,2012-08-27 08:00,2013-01-20 16:00,2012-08-27 08:00,2013-01-20 16:00,2012-08-27 08:00,2013-01-20 16:00,,2012-10-29 08:00,2013-03-21 16:00,,PT_Normal,,,,,jdkuzwv+cUqZlzFBbRdP8g,u+lYOixuZEmCroS3jLPeEw,,,N,0,0,,,2012-06-20 11:05,2012-06-20 11:05,admin,admin,,,
636,83753,772,10554,841,1,0,N,N,N,CP_Drtn,TT_Task,DT_FixedDUR2,RV_OK,TK_NotStart,DS084,Lifting Below Production Deck on High Cups,,24,0,40,0,0,0,40,0,0,0,,,,2012-10-23 08:00,2012-10-31 16:00,,2012-10-20 08:00,2012-10-24 16:00,2012-10-20 08:00,2012-10-24 16:00,2012-10-20 08:00,2012-10-24 16:00,,2012-10-23 08:00,2012-10-31 16:00,,PT_Normal,,,,,+dt7KogjuEGq8+Cywc7faA,7qUpAXG7dk+8p3OnysDIAQ,,,N,0,0,,,2012-06-20 11:05,2012-06-20 11:05,admin,admin,,,
637,83754,772,10554,841,1,0,N,N,N,CP_Drtn,TT_Task,DT_FixedDUR2,RV_OK,TK_NotStart,DS085,Lifting Production Deck on Below Production Level,,0,0,120,0,0,0,120,0,0,0,,,,2012-11-10 08:00,2012-11-27 16:00,,2012-11-10 08:00,2012-11-27 16:00,2012-11-10 08:00,2012-11-27 16:00,2012-11-10 08:00,2012-11-27 16:00,,2012-11-10 08:00,2012-11-27 16:00,,PT_Normal,,,,,N8hz5Av2F0auYVnNDCjlCw,pvhdQ+zLoUGlsGsHJLF0kg,,,Y,0,0,,,2012-06-20 11:05,2012-06-20 11:05,admin,admin,,,
638,83755,772,10554,841,1,0,N,N,N,CP_Drtn,TT_Task,DT_FixedDUR2,RV_OK,TK_NotStart,DS086,Fabrication & Installation of Deck Str. Miscellence / Padeyes,,80,24,960,0,0,0,960,0,0,0,,,,2012-10-17 08:00,2013-03-13 16:00,,2012-10-04 08:00,2013-03-02 16:00,2012-10-04 08:00,2013-03-02 16:00,2012-10-04 08:00,2013-03-02 16:00,,2012-10-17 08:00,2013-03-13 16:00,,PT_Normal,,,,,dtIw8dih5EmkYWky4ve+xA,or5G+IMdSky8NZLBdVW8xQ,,,N,0,0,,,2012-06-20 11:05,2012-06-20 11:05,admin,admin,,,
639,83756,772,10554,841,0,0,N,N,N,CP_Drtn,TT_FinMile,DT_FixedDrtn,RV_OK,TK_NotStart,DS087,Physical Weighting,,80,0,0,0,0,0,0,0,0,0,,,,2013-03-06 16:00,2013-03-06 16:00,,2013-02-23 16:00,2013-02-23 16:00,2013-02-23 16:00,2013-02-23 16:00,2013-02-23 16:00,2013-02-23 16:00,,2013-03-06 16:00,2013-03-06 16:00,,PT_Normal,,,,,iMOxmGMglEqFxead179hqg,JGpic5NftEGkYFLxWQfh6Q,,,N,0,0,,,2012-06-20 11:05,2012-06-20 11:05,admin,admin,,,
640,83757,772,10554,841,1,0,N,N,N,CP_Drtn,TT_Task,DT_FixedDUR2,RV_OK,TK_NotStart,DS078,Clearanse of structure (Fab. & Painting ) Punch List,,56,56,168,0,0,0,168,0,0,0,,,,2013-03-14 08:00,2013-04-07 16:00,,2013-03-06 08:00,2013-03-30 16:00,2013-03-06 08:00,2013-03-30 16:00,2013-03-06 08:00,2013-03-30 16:00,,2013-03-14 08:00,2013-04-07 16:00,,PT_Normal,,,,,krKKj+CZA02zZsZvEwIF/Q,UIxplIh3eEeSSoKUHZsCug,,,N,0,0,,,2012-06-20 11:05,2012-06-20 11:05,admin,admin,,,
641,83758,772,10556,841,1,0,N,N,N,CP_Drtn,TT_Task,DT_FixedDUR2,RV_OK,TK_NotStart,TFS071,Piping and Piping Supports Fabrication and Painting,,320,320,800,0,0,0,800,0,0,0,,,,2012-09-10 08:00,2013-01-10 16:00,,2012-07-21 08:00,2012-11-24 16:00,2012-07-21 08:00,2012-11-24 16:00,2012-07-21 08:00,2012-11-24 16:00,,2012-09-10 08:00,2013-01-10 16:00,,PT_Normal,,,,,pjAu3K4Rw0ukZQLj9lSPdg,Vo+VEHnX1Uib2F6euGIM0g,,,N,0,0,,,2012-06-20 11:05,2012-06-20 11:05,admin,admin,,,
642,83759,772,10556,841,1,0,N,N,N,CP_Drtn,TT_Task,DT_FixedDUR2,RV_OK,TK_NotStart,TSF072,Piping and Piping Supports Erection,,0,0,600,0,0,0,600,0,0,0,,,,2012-11-25 08:00,2013-02-23 16:00,,2012-11-25 08:00,2013-02-23 16:00,2012-11-25 08:00,2013-02-23 16:00,2012-11-25 08:00,2013-02-23 16:00,,2012-11-25 08:00,2013-02-23 16:00,,PT_Normal,,,,,qfcIIhu7d0e/KlFo/kUHiA,quyCDFL4eUW8pPpR3D60VQ,,,Y,0,0,,,2012-06-20 11:05,2012-06-20 11:05,admin,admin,,,
643,83760,772,10557,841,1,0,N,N,N,CP_Drtn,TT_Task,DT_FixedDUR2,RV_OK,TK_NotStart,TSF083,Equipment Erection on Below Production Level,,24,24,56,0,0,0,56,0,0,0,,,,2012-11-01 08:00,2012-11-08 16:00,,2012-10-29 08:00,2012-11-05 16:00,2012-10-29 08:00,2012-11-05 16:00,2012-10-29 08:00,2012-11-05 16:00,,2012-11-01 08:00,2012-11-08 16:00,,PT_Normal,,,,,35ynMT758k2RQT/pqw599w,Qa6Zp0iH/keaZsqvOalZPQ,,,N,0,0,,,2012-06-20 11:05,2012-06-20 11:05,admin,admin,,,
644,83761,772,10557,841,1,0,N,N,N,CP_Drtn,TT_Task,DT_FixedDUR2,RV_OK,TK_NotStart,TSF084,Equipment Erection on Production Level,,216,216,120,0,0,0,120,0,0,0,,,,2012-12-30 08:00,2013-01-16 16:00,,2012-11-28 08:00,2012-12-15 16:00,2012-11-28 08:00,2012-12-15 16:00,2012-11-28 08:00,2012-12-15 16:00,,2012-12-30 08:00,2013-01-16 16:00,,PT_Normal,,,,,sQUM1Z3eh0Woo+YTCCqKrQ,03vCXS0/Y0i+shto1SSNJQ,,,N,0,0,,,2012-06-20 11:05,2012-06-20 11:05,admin,admin,,,
645,83762,772,10557,841,1,0,N,N,N,CP_Drtn,TT_Task,DT_FixedDUR2,RV_OK,TK_NotStart,TSF085,Equipment Erection on Helideck,,400,400,56,0,0,0,56,0,0,0,,,,2013-02-16 08:00,2013-02-23 16:00,,2012-12-16 08:00,2012-12-23 16:00,2012-12-16 08:00,2012-12-23 16:00,2012-12-16 08:00,2012-12-23 16:00,,2013-02-16 08:00,2013-02-23 16:00,,PT_Normal,,,,,jHQidQaReE6mwvjI0Poyog,2mIAAJqfL02S54HKn+zoOQ,,,N,0,0,,,2012-06-20 11:05,2012-06-20 11:05,admin,admin,,,
646,83763,772,10558,841,1,0,N,N,N,CP_Drtn,TT_Task,DT_FixedDUR2,RV_OK,TK_NotStart,TS77,E&I Activity,,16,16,720,0,0,0,720,0,0,0,,,,2012-11-12 08:00,2013-02-28 16:00,,2012-11-10 08:00,2013-02-26 16:00,2012-11-10 08:00,2013-02-26 16:00,2012-11-10 08:00,2013-02-26 16:00,,2012-11-12 08:00,2013-02-28 16:00,,PT_Normal,,,,,R6k5u/0RMkySQMBXcYzU+g,+j8BLsZNOU+OrJICVK5F1w,,,N,0,0,,,2012-06-20 11:05,2012-06-20 11:05,admin,admin,,,
647,83764,772,10559,841,1,0,N,N,N,CP_Drtn,TT_Task,DT_FixedDUR2,RV_OK,TK_NotStart,TS78,"Pre-commissioning """" Piping Hydrotest , Reinstatment , Megering , Continuity Test and Touch Up """"",,0,0,280,0,0,0,280,0,0,0,,,,2013-02-18 08:00,2013-03-30 16:00,,2013-02-18 08:00,2013-03-30 16:00,2013-02-18 08:00,2013-03-30 16:00,2013-02-18 08:00,2013-03-30 16:00,,2013-02-18 08:00,2013-03-30 16:00,,PT_Normal,,,,,+zNMyGLDuke1xr2uHKTwhQ,OTq2jcFatkOlMrI23bWX1Q,,,Y,0,0,,,2012-06-20 11:05,2012-06-20 11:05,admin,admin,,,
648,83765,772,10546,841,1,0,N,N,N,CP_Drtn,TT_Task,DT_FixedDUR2,RV_OK,TK_NotStart,PL71,P/L Spools Fabrication,,832,0,720,0,0,0,720,0,0,0,,,,2012-11-07 08:00,2013-02-24 16:00,,2012-06-30 08:00,2012-10-17 16:00,2012-06-30 08:00,2012-10-17 16:00,2012-06-30 08:00,2012-10-17 16:00,,2012-11-07 08:00,2013-02-24 16:00,,PT_Normal,,,,,7MF57auU5kmhwYWFXaYHZQ,fNpyI06rOEST5I8j8iDnuA,,,N,0,0,,,2012-06-20 11:05,2012-06-20 11:05,admin,admin,,,
649,83766,772,10547,841,0,0,N,N,N,CP_Drtn,TT_Mile,DT_FixedDrtn,RV_OK,TK_NotStart,LOPS71,Arrival of 01st Shipment Material Barge ( P/L Spools),,0,128,0,0,0,0,0,0,0,0,2012-09-15 08:00,,,2012-09-15 08:00,2012-09-15 08:00,,2012-09-15 08:00,2012-09-15 08:00,2012-09-15 08:00,2012-09-15 08:00,2012-09-15 08:00,2012-09-15 08:00,,2012-09-15 08:00,2012-09-15 08:00,CS_MSO,PT_Normal,,,,,Hn+zNmehbESQGu1JNuPabQ,xehV9+x7ZE2jS/zzmhzWQA,,,N,0,0,,,2012-06-20 11:05,2012-06-20 11:05,admin,admin,,,
650,83767,772,10547,841,1,0,N,N,N,CP_Drtn,TT_Task,DT_FixedDUR2,RV_OK,TK_NotStart,LOPS72,1st Shipment Material Barge Preparation,,1088,0,96,0,0,0,96,0,0,0,,,,2013-03-20 08:00,2013-04-02 16:00,,2012-10-03 08:00,2012-10-17 16:00,2012-10-03 08:00,2012-10-17 16:00,2012-10-03 08:00,2012-10-17 16:00,,2013-03-20 08:00,2013-04-02 16:00,,PT_Normal,,,,,NROR+gL5/E22sIzfLmOiyA,ndqnrpRNm0Kh7Ee9x77pLg,,,N,0,0,,,2012-06-20 11:05,2012-06-20 11:05,admin,admin,,,
651,83768,772,10547,841,1,0,N,N,N,CP_Drtn,TT_Task,DT_FixedDUR2,RV_OK,TK_NotStart,LOPS73,"L/O & Sea Fastening (P/L Spools 18"""" & 8"""")",,1088,0,32,0,0,0,32,0,0,0,,,,2013-04-03 08:00,2013-04-07 16:00,,2012-10-18 08:00,2012-10-22 16:00,2012-10-18 08:00,2012-10-22 16:00,2012-10-18 08:00,2012-10-22 16:00,,2013-04-03 08:00,2013-04-07 16:00,,PT_Normal,,,,,JEE9ZdQZ0ESELtmtq45KeQ,kp9L75XeSkWVYE8hGyBpLQ,,,N,0,0,,,2012-06-20 11:05,2012-06-20 11:05,admin,admin,,,
652,83769,772,10548,841,0,0,N,N,N,CP_Drtn,TT_Mile,DT_FixedDrtn,RV_OK,TK_NotStart,LOJK71,Arrival of 02nd Shipment Material Barge ( Jacket and Piles ),,0,263.983333,0,0,0,0,0,0,0,0,2012-12-01 08:01,,,2012-12-01 08:01,2012-12-01 08:01,,2012-12-01 08:01,2012-12-01 08:01,2012-12-01 08:01,2012-12-01 08:01,2012-12-01 08:01,2012-12-01 08:01,,2012-12-01 08:01,2012-12-01 08:01,CS_MSO,PT_Normal,,,,,KaMeKBiyrUKCpqhLG64eoQ,/rdQ3u43Y0aVeyWgwwuYrQ,,,N,0,0,,,2012-06-20 11:05,2012-06-20 11:05,admin,admin,,,
653,83770,772,10548,841,1,0,N,N,N,CP_Drtn,TT_Task,DT_FixedDUR2,RV_OK,TK_NotStart,LOJK72,02nd Shipment Material Barge Preparation,,208,0,96,0,0,0,96,0,0,0,,,,2013-02-11 08:00,2013-02-24 16:00,,2013-01-09 08:00,2013-01-22 16:00,2013-01-09 08:00,2013-01-22 16:00,2013-01-09 08:00,2013-01-22 16:00,,2013-02-11 08:00,2013-02-24 16:00,,PT_Normal,,,,,E8tidqMNe0C5nkN7cuM62w,S7wGNTJDfUW+8AjycDcj2g,,,N,0,0,,,2012-06-20 11:05,2012-06-20 11:05,admin,admin,,,
654,83771,772,10548,841,1,0,N,N,N,CP_Drtn,TT_Task,DT_FixedDUR2,RV_OK,TK_NotStart,LOJK73,L/O & Sea fastening ( Jacket & Piles ),,208,0,56,0,0,0,56,0,0,0,,,,2013-02-25 08:00,2013-03-04 16:00,,2013-01-23 08:00,2013-01-31 16:00,2013-01-23 08:00,2013-01-31 16:00,2013-01-23 08:00,2013-01-31 16:00,,2013-02-25 08:00,2013-03-04 16:00,,PT_Normal,,,,,CEUUQcEmQkiZ3f88P89vEQ,T2pkffL22UqmUBjuIecM7w,,,N,0,0,,,2012-06-20 11:05,2012-06-20 11:05,admin,admin,,,
655,83772,772,10545,841,0,0,N,N,N,CP_Drtn,TT_Mile,DT_FixedDrtn,RV_OK,TK_NotStart,LODK71,Arrival of 03rd Shipment Material Barge ( Deck C/W TSF ),,-0.016667,104,0,0,0,0,0,0,0,0,2013-03-01 08:01,,,2013-02-28 15:59,2013-02-28 15:59,,2013-03-02 08:00,2013-03-02 08:00,2013-03-02 08:00,2013-03-02 08:00,2013-03-02 08:00,2013-03-02 08:00,,2013-02-28 15:59,2013-02-28 15:59,CS_MSO,PT_Normal,,,,,gftlcgDcEUqYLPpWb7lS/Q,+yVxVOPraUyK1NRhdp+wfA,,,N,0,0,,,2012-06-20 11:05,2012-06-20 11:05,admin,admin,,,
656,83773,772,10545,841,1,0,N,N,N,CP_Drtn,TT_Task,DT_FixedDUR2,RV_OK,TK_NotStart,LODK72,3rd Shipment Material Barge Preparation,,0,0,96,0,0,0,96,0,0,0,,,,2013-03-17 08:00,2013-03-30 16:00,,2013-03-17 08:00,2013-03-30 16:00,2013-03-17 08:00,2013-03-30 16:00,2013-03-17 08:00,2013-03-30 16:00,,2013-03-17 08:00,2013-03-30 16:00,,PT_Normal,,,,,C5XcFVbAyk+gVaS2BatE2A,udpKSE0PREWpEz84cupRDw,,,Y,0,0,,,2012-06-20 11:05,2012-06-20 11:05,admin,admin,,,
657,83774,772,10545,841,1,0,N,N,N,CP_Drtn,TT_Task,DT_FixedDUR2,RV_OK,TK_NotStart,LODK73,L/O & Sea fastening ( Deck),,0,0,56,0,0,0,56,0,0,0,,,,2013-03-31 08:00,2013-04-07 16:00,,2013-03-31 08:00,2013-04-07 16:00,2013-03-31 08:00,2013-04-07 16:00,2013-03-31 08:00,2013-04-07 16:00,,2013-03-31 08:00,2013-04-07 16:00,,PT_Normal,,,,,/0NkX6j9fk6Wa4XqY6WVZQ,InSRN6FydkWjBf3988Pjxg,,,Y,0,0,,,2012-06-20 11:05,2012-06-20 11:05,admin,admin,,,
658,83775,772,10542,794,1,0,N,N,N,CP_Drtn,TT_Task,DT_FixedDrtn,RV_OK,TK_NotStart,PRP152,"Pipeline 8"""" & Fittings",,-0.016667,2087,408,0,0,0,408,0,0,0,2012-05-30 17:00,,,2012-05-30 16:59,2012-07-20 16:59,,2012-05-31 08:00,2012-07-20 17:00,2012-05-31 08:00,2012-07-20 17:00,2012-05-31 08:00,2012-07-20 17:00,,2012-05-30 16:59,2012-07-20 16:59,CS_MSO,PT_Normal,,,,,AbmUzP+mmkW9K1fm7VxkEA,9oZfFZekBkiGUClhj5HB5A,,,N,0,0,,,2012-06-20 11:05,2012-06-20 11:05,admin,admin,,,
659,83776,772,10554,841,1,0,N,N,N,CP_Drtn,TT_Task,DT_FixedDUR2,RV_OK,TK_NotStart,DS091,Fabrication and Painting of Below Production Deck/Legs,,0,0,840,0,0,0,840,0,0,0,,,,2012-06-13 08:00,2012-10-18 16:00,,2012-06-13 08:00,2012-10-18 16:00,2012-06-13 08:00,2012-10-18 16:00,2012-06-13 08:00,2012-10-18 16:00,,2012-06-13 08:00,2012-10-18 16:00,,PT_Normal,,,,,wAQaK9qKkEWs98D3nS6B1g,YDhnGt4WSampcAcCK/B2gQ,,,Y,0,0,,,2012-06-20 11:05,2012-06-20 11:05,admin,admin,,,
660,83777,772,10554,841,1,0,N,N,N,CP_Drtn,TT_Task,DT_FixedDUR2,RV_OK,TK_NotStart,DS092,Fabrication and Painting of Production Deck,,0,0,960,0,0,0,960,0,0,0,,,,2012-06-13 08:00,2012-11-08 16:00,,2012-06-13 08:00,2012-11-08 16:00,2012-06-13 08:00,2012-11-08 16:00,2012-06-13 08:00,2012-11-08 16:00,,2012-06-13 08:00,2012-11-08 16:00,,PT_Normal,,,,,19fC1sp0R0KWJzEipjVJPQ,xFi93CoKSi++4GmIMxpP9w,,,Y,0,0,,,2012-06-20 11:05,2012-06-20 11:05,admin,admin,,,
661,83778,772,10554,841,1,0,N,N,N,CP_Drtn,TT_Task,DT_FixedDUR2,RV_OK,TK_NotStart,DS093,Fabrication and Paint of Heli-Deck ( & Lifting if Required),,400,0,960,0,0,0,960,0,0,0,,,,2012-10-29 08:00,2013-03-21 16:00,,2012-08-27 08:00,2013-01-20 16:00,2012-08-27 08:00,2013-01-20 16:00,2012-08-27 08:00,2013-01-20 16:00,,2012-10-29 08:00,2013-03-21 16:00,,PT_Normal,,,,,25wJlmIOEEGDWoCWuHImKA,rvAg4dTFTzOC9LQPbMvlVA,,,N,0,0,,,2012-06-20 11:05,2012-06-20 11:05,admin,admin,,,
662,83779,772,10554,841,1,0,N,N,N,CP_Drtn,TT_Task,DT_FixedDUR2,RV_OK,TK_NotStart,DS094,Lifting Below Production Deck on High Cups,,24,0,40,0,0,0,40,0,0,0,,,,2012-10-23 08:00,2012-10-31 16:00,,2012-10-20 08:00,2012-10-24 16:00,2012-10-20 08:00,2012-10-24 16:00,2012-10-20 08:00,2012-10-24 16:00,,2012-10-23 08:00,2012-10-31 16:00,,PT_Normal,,,,,gQKXnuyQAEOPdiGORc4TjQ,bQ+CxC0TQriVcwNqie/vXQ,,,N,0,0,,,2012-06-20 11:05,2012-06-20 11:05,admin,admin,,,
663,83780,772,10554,841,1,0,N,N,N,CP_Drtn,TT_Task,DT_FixedDUR2,RV_OK,TK_NotStart,DS095,Lifting Production Deck on Below Production Level,,0,0,120,0,0,0,120,0,0,0,,,,2012-11-10 08:00,2012-11-27 16:00,,2012-11-10 08:00,2012-11-27 16:00,2012-11-10 08:00,2012-11-27 16:00,2012-11-10 08:00,2012-11-27 16:00,,2012-11-10 08:00,2012-11-27 16:00,,PT_Normal,,,,,88vQyAN0yU+O5oQp/HT/zg,kvv6UChdRT2TML26fqP2Og,,,Y,0,0,,,2012-06-20 11:05,2012-06-20 11:05,admin,admin,,,
664,83781,772,10554,841,1,0,N,N,N,CP_Drtn,TT_Task,DT_FixedDUR2,RV_OK,TK_NotStart,DS096,Fabrication & Installation of Deck Str. Miscellence / Padeyes,,80,24,960,0,0,0,960,0,0,0,,,,2012-10-17 08:00,2013-03-13 16:00,,2012-10-04 08:00,2013-03-02 16:00,2012-10-04 08:00,2013-03-02 16:00,2012-10-04 08:00,2013-03-02 16:00,,2012-10-17 08:00,2013-03-13 16:00,,PT_Normal,,,,,sjrR1mjv7kOgBRwwESZeRw,CWEx43mfRrCS6ZOEt8Q5OA,,,N,0,0,,,2012-06-20 11:05,2012-06-20 11:05,admin,admin,,,
665,83782,772,10554,841,0,0,N,N,N,CP_Drtn,TT_FinMile,DT_FixedDrtn,RV_OK,TK_NotStart,DS097,Physical Weighting,,80,0,0,0,0,0,0,0,0,0,,,,2013-03-06 16:00,2013-03-06 16:00,,2013-02-23 16:00,2013-02-23 16:00,2013-02-23 16:00,2013-02-23 16:00,2013-02-23 16:00,2013-02-23 16:00,,2013-03-06 16:00,2013-03-06 16:00,,PT_Normal,,,,,eZo3mOC0qE2mAB/k9UmD5A,dU19c7ngSBGK2PpNjJWMWA,,,N,0,0,,,2012-06-20 11:05,2012-06-20 11:05,admin,admin,,,
666,83783,772,10557,841,1,0,N,N,N,CP_Drtn,TT_Task,DT_FixedDUR2,RV_OK,TK_NotStart,TSF093,Equipment Erection on Below Production Level,,24,24,56,0,0,0,56,0,0,0,,,,2012-11-01 08:00,2012-11-08 16:00,,2012-10-29 08:00,2012-11-05 16:00,2012-10-29 08:00,2012-11-05 16:00,2012-10-29 08:00,2012-11-05 16:00,,2012-11-01 08:00,2012-11-08 16:00,,PT_Normal,,,,,rBEc+1WKikOpRtlVKcqF1Q,LQiCxK3/v0WUQtxj4/eZtw,,,N,0,0,,,2012-06-20 11:05,2012-06-20 11:05,admin,admin,,,
667,83784,772,10557,841,1,0,N,N,N,CP_Drtn,TT_Task,DT_FixedDUR2,RV_OK,TK_NotStart,TSF094,Equipment Erection on Production Level,,216,216,120,0,0,0,120,0,0,0,,,,2012-12-30 08:00,2013-01-16 16:00,,2012-11-28 08:00,2012-12-15 16:00,2012-11-28 08:00,2012-12-15 16:00,2012-11-28 08:00,2012-12-15 16:00,,2012-12-30 08:00,2013-01-16 16:00,,PT_Normal,,,,,LGb2O2f5EES2aHDHYz0M2w,f3d6itKKc0eAsKFsmlMw9g,,,N,0,0,,,2012-06-20 11:05,2012-06-20 11:05,admin,admin,,,
668,83785,772,10557,841,1,0,N,N,N,CP_Drtn,TT_Task,DT_FixedDUR2,RV_OK,TK_NotStart,TSF095,Equipment Erection on Helideck,,400,400,56,0,0,0,56,0,0,0,,,,2013-02-16 08:00,2013-02-23 16:00,,2012-12-16 08:00,2012-12-23 16:00,2012-12-16 08:00,2012-12-23 16:00,2012-12-16 08:00,2012-12-23 16:00,,2013-02-16 08:00,2013-02-23 16:00,,PT_Normal,,,,,KJdhvJAmNU633S7u/KRA1g,aUBY6CFV5USUmrHmKoFEjw,,,N,0,0,,,2012-06-20 11:05,2012-06-20 11:05,admin,admin,,,
