,task_id,proj_id,wbs_id,clndr_id,est_wt,phys_complete_pct,rev_fdbk_flag,lock_plan_flag,auto_compute_act_flag,complete_pct_type,task_type,duration_type,review_type,status_code,task_code,task_name,rsrc_id,total_float_hr_cnt,free_float_hr_cnt,remain_drtn_hr_cnt,act_work_qty,remain_work_qty,target_work_qty,target_drtn_hr_cnt,target_equip_qty,act_equip_qty,remain_equip_qty,cstr_date,act_start_date,act_end_date,late_start_date,late_end_date,expect_end_date,early_start_date,early_end_date,restart_date,reend_date,target_start_date,target_end_date,review_end_date,rem_late_start_date,rem_late_end_date,cstr_type,priority_type,suspend_date,resume_date,float_path,float_path_order,guid,tmpl_guid,cstr_date2,cstr_type2,driving_path_flag,act_this_per_work_qty,act_this_per_equip_qty,external_early_start_date,external_late_end_date,create_date,update_date,create_user,update_user
0,129450,3769,19882,1191,1,100,N,N,N,CP_Drtn,TT_Task,DT_FixedDUR2,RV_OK,TK_Complete,A1160,Site preparation,,,,0,0,0,0,120,0,0,0,,2012-03-18 00:00,2012-03-30 00:00,,,,,,,,2012-04-29 08:00,2012-05-13 16:00,,,,,PT_Normal,,,,,vuCg03dr30GCcqBcmDKvHA,,,,N,0,0,,,2012-05-05 12:17,2012-05-16 14:02,admin,admin
1,129451,3769,19881,1191,0,100,N,N,N,CP_Drtn,TT_Mile,DT_FixedDrtn,RV_OK,TK_Complete,MS-1000,Commencement date,,,,0,0,0,0,0,0,0,0,,2012-03-18 00:00,2012-03-18 00:00,,,,,,,,2012-04-29 08:00,2012-04-29 08:00,,,,,PT_Normal,,,,,wpi1bpIZPUq+9PTKdTqOvg,Ui+3UMgODkOZVYIxXiRyjA,,,N,0,0,,,2012-05-05 12:17,2012-05-16 14:02,admin,admin
2,129452,3769,19881,1191,0,0,N,N,N,CP_Drtn,TT_FinMile,DT_FixedDrtn,RV_OK,TK_NotStart,MS-1030,Project handing over,,0,0,0,0,0,0,0,0,0,0,,,,2012-10-15 16:00,2012-10-15 16:00,,2012-10-15 16:00,2012-10-15 16:00,2012-10-15 16:00,2012-10-15 16:00,2012-10-15 16:00,2012-10-15 16:00,,2012-10-15 16:00,2012-10-15 16:00,,PT_Normal,,,,,BvVq6tsi802gEOpnEaV71w,6ucjAR6YqUmx70EsHRTSag,,,Y,0,0,,,2012-05-05 12:17,2012-05-16 14:02,admin,admin
3,129453,3769,19881,1191,0,100,N,N,N,CP_Drtn,TT_Mile,DT_FixedDrtn,RV_OK,TK_Complete,MS-1020,Receive advanced payment,,,,0,0,0,0,0,0,0,0,2012-03-18 08:00,2012-03-18 00:00,2012-03-18 00:00,,,,,,,,2012-04-29 08:00,2012-04-29 08:00,,,,CS_MANDSTART,PT_Normal,,,,,huJH80K8TE+wfTI+mLfxLQ,,,,N,0,0,,,2012-05-05 12:17,2012-05-16 14:02,admin,admin
4,129454,3769,19922,1191,1,100,N,N,N,CP_Drtn,TT_Task,DT_FixedDUR2,RV_OK,TK_Complete,SD-H-2-10,P.C footings,,,,0,0,0,0,8,0,0,0,,2012-03-18 00:00,2012-03-18 00:00,,,,,,,,2012-03-20 08:00,2012-03-20 16:00,,,,,PT_Normal,,,,,ec3/BvdTuUS9yexp1M3Xdw,,,,N,0,0,,,2012-05-05 12:17,2012-05-16 14:02,admin,admin
5,129455,3769,19922,1191,1,100,N,N,N,CP_Drtn,TT_Task,DT_FixedDUR2,RV_OK,TK_Complete,SD-H-2-20,R.c footings,,,,0,0,0,0,8,0,0,0,,2012-04-04 00:00,2012-04-04 00:00,,,,,,,,2012-04-30 08:00,2012-04-30 16:00,,,,,PT_Normal,,,,,hyVrnNJb+E6er4EOy0OJbA,,,,N,0,0,,,2012-05-05 12:17,2012-05-16 14:02,admin,admin
6,129456,3769,19922,1191,1,0,N,N,N,CP_Drtn,TT_Task,DT_FixedDUR2,RV_OK,TK_NotStart,SD-H-2-30,Ground floor columns,,456,0,8,0,0,0,8,0,0,0,,,,2012-07-22 08:00,2012-07-22 16:00,,2012-05-16 08:00,2012-05-16 16:00,2012-05-16 08:00,2012-05-16 16:00,2012-05-16 08:00,2012-05-16 16:00,,2012-07-22 08:00,2012-07-22 16:00,,PT_Normal,,,,,zGN/a9k1xUOvXFqYEeg5JA,,,,N,0,0,,,2012-05-05 12:17,2012-05-16 14:02,admin,admin
7,129457,3769,19922,1191,1,100,N,N,N,CP_Drtn,TT_Task,DT_FixedDUR2,RV_OK,TK_Complete,SD-H-2-40,Ground floor slabs,,,,0,0,0,0,8,0,0,0,,2012-04-29 00:00,2012-04-29 00:00,,,,,,,,2012-05-05 08:00,2012-05-05 16:00,,,,,PT_Normal,,,,,h8FT5HVyMkWCffYkHcDmWQ,,,,N,0,0,,,2012-05-05 12:17,2012-05-16 14:02,admin,admin
8,129458,3769,19922,1191,1,0,N,N,N,CP_Drtn,TT_Task,DT_FixedDUR2,RV_OK,TK_NotStart,SD-H-2-50,first floor columns,,608,0,8,0,0,0,8,0,0,0,,,,2012-08-13 08:00,2012-08-13 16:00,,2012-05-16 08:00,2012-05-16 16:00,2012-05-16 08:00,2012-05-16 16:00,2012-05-16 08:00,2012-05-16 16:00,,2012-08-13 08:00,2012-08-13 16:00,,PT_Normal,,,,,F/g5cZWkSUyqstsvW0qfzw,,,,N,0,0,,,2012-05-05 12:17,2012-05-16 14:02,admin,admin
9,129459,3769,19922,1191,1,0,N,N,N,CP_Drtn,TT_Task,DT_FixedDUR2,RV_OK,TK_NotStart,SD-H-2-60,First floor slab,,672,0,8,0,0,0,8,0,0,0,,,,2012-08-22 08:00,2012-08-22 16:00,,2012-05-16 08:00,2012-05-16 16:00,2012-05-16 08:00,2012-05-16 16:00,2012-05-16 08:00,2012-05-16 16:00,,2012-08-22 08:00,2012-08-22 16:00,,PT_Normal,,,,,ZxOG8iX4vkaOVxnQzVF3Uw,,,,N,0,0,,,2012-05-05 12:17,2012-05-16 14:02,admin,admin
10,129460,3769,19922,1191,1,0,N,N,N,CP_Drtn,TT_Task,DT_FixedDUR2,RV_OK,TK_NotStart,SD-H-2-70,Second floor columns,,760,0,8,0,0,0,8,0,0,0,,,,2012-09-04 08:00,2012-09-04 16:00,,2012-05-16 08:00,2012-05-16 16:00,2012-05-16 08:00,2012-05-16 16:00,2012-05-16 08:00,2012-05-16 16:00,,2012-09-04 08:00,2012-09-04 16:00,,PT_Normal,,,,,jO5056rUJUqyf3fgQ7kxTg,,,,N,0,0,,,2012-05-05 12:17,2012-05-16 14:02,admin,admin
11,129461,3769,19922,1191,1,0,N,N,N,CP_Drtn,TT_Task,DT_FixedDUR2,RV_OK,TK_NotStart,SD-H-2-80,Second floor slab,,816,0,8,0,0,0,8,0,0,0,,,,2012-09-12 08:00,2012-09-12 16:00,,2012-05-16 08:00,2012-05-16 16:00,2012-05-16 08:00,2012-05-16 16:00,2012-05-16 08:00,2012-05-16 16:00,,2012-09-12 08:00,2012-09-12 16:00,,PT_Normal,,,,,UaOMvlN4OE2ybTL600vCVg,,,,N,0,0,,,2012-05-05 12:17,2012-05-16 14:02,admin,admin
12,129462,3769,19897,1191,1,100,N,N,N,CP_Drtn,TT_Task,DT_FixedDUR2,RV_OK,TK_Complete,SD-C-10,Building 1,,,,0,0,0,0,8,0,0,0,,2012-03-27 00:00,2012-03-27 00:00,,,,,,,,2012-03-21 08:00,2012-03-21 16:00,,,,,PT_Normal,,,,,qEuXbOOu90Oz5vIKiOa9hA,DJqmnZU+Ek6DC34w8gVqrg,,,N,0,0,,,2012-05-05 12:17,2012-05-16 14:02,admin,admin
13,129463,3769,19897,1191,1,100,N,N,N,CP_Drtn,TT_Task,DT_FixedDUR2,RV_OK,TK_Complete,SD-C-20,Building 2,,,,0,0,0,0,8,0,0,0,,2012-03-27 00:00,2012-03-27 00:00,,,,,,,,2012-03-21 08:00,2012-03-21 16:00,,,,,PT_Normal,,,,,veRkvN3zSESLf1akH4yGqw,BnOWJkzkmUyFgM2G4Hz5UQ,,,N,0,0,,,2012-05-05 12:17,2012-05-16 14:02,admin,admin
14,129464,3769,19897,1191,1,100,N,N,N,CP_Drtn,TT_Task,DT_FixedDUR2,RV_OK,TK_Complete,SD-C-30,Building 3,,,,0,0,0,0,8,0,0,0,,2012-03-27 00:00,2012-03-27 00:00,,,,,,,,2012-03-21 08:00,2012-03-21 16:00,,,,,PT_Normal,,,,,9jxtb5UHoE6mqAE2mJRetA,OLnKs9HZE0ewUj+o1GWNHg,,,N,0,0,,,2012-05-05 12:17,2012-05-16 14:02,admin,admin
15,129465,3769,19897,1191,1,100,N,N,N,CP_Drtn,TT_Task,DT_FixedDUR2,RV_OK,TK_Complete,SD-C-40,Building 4,,,,0,0,0,0,8,0,0,0,,2012-03-27 00:00,2012-03-27 00:00,,,,,,,,2012-03-21 08:00,2012-03-21 16:00,,,,,PT_Normal,,,,,LAkuTQzsNEmD8hXLnDvtQg,0Qq93sXlnkaNiBfr/agarw,,,N,0,0,,,2012-05-05 12:17,2012-05-16 14:02,admin,admin
16,129466,3769,19953,1191,1,100,N,N,N,CP_Drtn,TT_Task,DT_FixedDUR2,RV_OK,TK_Complete,SD-H-3-10,P.C footings,,,,0,0,0,0,8,0,0,0,,2012-03-18 00:00,2012-03-18 00:00,,,,,,,,2012-03-20 08:00,2012-03-20 16:00,,,,,PT_Normal,,,,,CIvNJ3BDG0CF5GRugAP4Tw,DJqmnZU+Ek6DC34w8gVqrg,,,N,0,0,,,2012-05-05 12:17,2012-05-16 14:02,admin,admin
17,129467,3769,19953,1191,1,100,N,N,N,CP_Drtn,TT_Task,DT_FixedDUR2,RV_OK,TK_Complete,SD-H-3-20,R.c footings,,,,0,0,0,0,8,0,0,0,,2012-03-27 00:00,2012-03-27 00:00,,,,,,,,2012-03-24 08:00,2012-03-24 16:00,,,,,PT_Normal,,,,,ggOr/paimUKsrpILX6SJTA,BnOWJkzkmUyFgM2G4Hz5UQ,,,N,0,0,,,2012-05-05 12:17,2012-05-16 14:02,admin,admin
18,129468,3769,19953,1191,1,100,N,N,N,CP_Drtn,TT_Task,DT_FixedDUR2,RV_OK,TK_Complete,SD-H-3-30,Ground floor columns,,,,0,0,0,0,8,0,0,0,,2012-04-18 00:00,2012-04-18 00:00,,,,,,,,2012-04-30 08:00,2012-04-30 16:00,,,,,PT_Normal,,,,,iJDvLlRT8EaFYWIBwkFafQ,OLnKs9HZE0ewUj+o1GWNHg,,,N,0,0,,,2012-05-05 12:17,2012-05-16 14:02,admin,admin
19,129469,3769,19953,1191,1,100,N,N,N,CP_Drtn,TT_Task,DT_FixedDUR2,RV_OK,TK_Complete,SD-H-3-40,Ground floor slabs,,,,0,0,0,0,8,0,0,0,,2012-04-24 00:00,2012-04-24 00:00,,,,,,,,2012-04-30 08:00,2012-04-30 16:00,,,,,PT_Normal,,,,,a7OIEdbHkkS1AYMD5u12zw,0Qq93sXlnkaNiBfr/agarw,,,N,0,0,,,2012-05-05 12:17,2012-05-16 14:02,admin,admin
20,129470,3769,19953,1191,1,100,N,N,N,CP_Drtn,TT_Task,DT_FixedDUR2,RV_OK,TK_Complete,SD-H-3-50,first floor columns,,,,0,0,0,0,8,0,0,0,,2012-04-28 00:00,2012-04-28 00:00,,,,,,,,2012-04-30 08:00,2012-04-30 16:00,,,,,PT_Normal,,,,,qgwdRz17NE+1ci+C6lY29Q,pqzkqsWJqkGtoblH/Sz1uQ,,,N,0,0,,,2012-05-05 12:17,2012-05-16 14:02,admin,admin
21,129471,3769,19953,1191,1,100,N,N,N,CP_Drtn,TT_Task,DT_FixedDUR2,RV_OK,TK_Complete,SD-H-3-60,First floor slab,,,,0,0,0,0,8,0,0,0,,2012-05-09 00:00,2012-05-09 00:00,,,,,,,,2012-05-05 08:00,2012-05-05 16:00,,,,,PT_Normal,,,,,5/dedz9BZ0SYbnPSCPbs4w,j+tqAi3yQUWirq+0jueTxw,,,N,0,0,,,2012-05-05 12:17,2012-05-16 14:02,admin,admin
22,129472,3769,19953,1191,1,0,N,N,N,CP_Drtn,TT_Task,DT_FixedDUR2,RV_OK,TK_NotStart,SD-H-3-70,Second floor columns,,632,0,8,0,0,0,8,0,0,0,,,,2012-08-16 08:00,2012-08-16 16:00,,2012-05-16 08:00,2012-05-16 16:00,2012-05-16 08:00,2012-05-16 16:00,2012-05-16 08:00,2012-05-16 16:00,,2012-08-16 08:00,2012-08-16 16:00,,PT_Normal,,,,,Jf9CpcjddUmLouogFPsgaA,IJHlevO7pUaiW03q2sDoYA,,,N,0,0,,,2012-05-05 12:17,2012-05-16 14:02,admin,admin
23,129473,3769,19953,1191,1,0,N,N,N,CP_Drtn,TT_Task,DT_FixedDUR2,RV_OK,TK_NotStart,SD-H-3-80,Second floor slab,,728,0,8,0,0,0,8,0,0,0,,,,2012-08-30 08:00,2012-08-30 16:00,,2012-05-16 08:00,2012-05-16 16:00,2012-05-16 08:00,2012-05-16 16:00,2012-05-16 08:00,2012-05-16 16:00,,2012-08-30 08:00,2012-08-30 16:00,,PT_Normal,,,,,3eWR9MunJUiRy9YtZQowRQ,MeDJdvrHMkCuKKQwyHJquQ,,,N,0,0,,,2012-05-05 12:17,2012-05-16 14:02,admin,admin
24,129474,3769,19968,1191,1,100,N,N,N,CP_Drtn,TT_Task,DT_FixedDUR2,RV_OK,TK_Complete,SD-H-4-10,P.C footings,,,,0,0,0,0,8,0,0,0,,2012-03-18 00:00,2012-03-18 00:00,,,,,,,,2012-03-20 08:00,2012-03-20 16:00,,,,,PT_Normal,,,,,LSlrIKw+GESuRRKWfVui5g,DJqmnZU+Ek6DC34w8gVqrg,,,N,0,0,,,2012-05-05 12:17,2012-05-16 14:02,admin,admin
25,129475,3769,19968,1191,1,100,N,N,N,CP_Drtn,TT_Task,DT_FixedDUR2,RV_OK,TK_Complete,SD-H-4-20,R.c footings,,,,0,0,0,0,8,0,0,0,,2012-03-25 00:00,2012-03-25 00:00,,,,,,,,2012-03-24 08:00,2012-03-24 16:00,,,,,PT_Normal,,,,,2h4hsE0oiEq8ej3e0M1Q+A,BnOWJkzkmUyFgM2G4Hz5UQ,,,N,0,0,,,2012-05-05 12:17,2012-05-16 14:02,admin,admin
26,129476,3769,19968,1191,1,100,N,N,N,CP_Drtn,TT_Task,DT_FixedDUR2,RV_OK,TK_Complete,SD-H-4-30,Ground floor columns,,,,0,0,0,0,8,0,0,0,,2012-04-13 00:00,2012-04-13 00:00,,,,,,,,2012-05-05 08:00,2012-05-05 16:00,,,,,PT_Normal,,,,,/y3KCXCxnkqdabS5hLjFMg,OLnKs9HZE0ewUj+o1GWNHg,,,N,0,0,,,2012-05-05 12:17,2012-05-16 14:02,admin,admin
27,129477,3769,19968,1191,1,100,N,N,N,CP_Drtn,TT_Task,DT_FixedDUR2,RV_OK,TK_Complete,SD-H-4-40,Ground floor slabs,,,,0,0,0,0,8,0,0,0,,2012-04-29 00:00,2012-04-29 00:00,,,,,,,,2012-04-30 08:00,2012-04-30 16:00,,,,,PT_Normal,,,,,SS7HBN0PV0qFlYv9Vw9L/w,0Qq93sXlnkaNiBfr/agarw,,,N,0,0,,,2012-05-05 12:17,2012-05-16 14:02,admin,admin
28,129478,3769,19968,1191,1,100,N,N,N,CP_Drtn,TT_Task,DT_FixedDUR2,RV_OK,TK_Complete,SD-H-4-50,first floor columns,,,,0,0,0,0,8,0,0,0,,2012-04-28 00:00,2012-04-28 00:00,,,,,,,,2012-04-30 08:00,2012-04-30 16:00,,,,,PT_Normal,,,,,vhAThX5IDkC4iDxqGZZh7w,pqzkqsWJqkGtoblH/Sz1uQ,,,N,0,0,,,2012-05-05 12:17,2012-05-16 14:02,admin,admin
29,129479,3769,19968,1191,1,100,N,N,N,CP_Drtn,TT_Task,DT_FixedDUR2,RV_OK,TK_Complete,SD-H-4-60,First floor slab,,,,0,0,0,0,8,0,0,0,,2012-05-06 00:00,2012-05-06 00:00,,,,,,,,2012-05-05 08:00,2012-05-05 16:00,,,,,PT_Normal,,,,,0bHIeyJcKk+HP9bmnEAUpQ,j+tqAi3yQUWirq+0jueTxw,,,N,0,0,,,2012-05-05 12:17,2012-05-16 14:02,admin,admin
30,129480,3769,19968,1191,1,0,N,N,N,CP_Drtn,TT_Task,DT_FixedDUR2,RV_OK,TK_NotStart,SD-H-4-70,Second floor columns,,632,0,8,0,0,0,8,0,0,0,,,,2012-08-16 08:00,2012-08-16 16:00,,2012-05-16 08:00,2012-05-16 16:00,2012-05-16 08:00,2012-05-16 16:00,2012-05-16 08:00,2012-05-16 16:00,,2012-08-16 08:00,2012-08-16 16:00,,PT_Normal,,,,,n8Ag7iUlwkufmR/a//nuow,IJHlevO7pUaiW03q2sDoYA,,,N,0,0,,,2012-05-05 12:17,2012-05-16 14:02,admin,admin
31,129481,3769,19968,1191,1,0,N,N,N,CP_Drtn,TT_Task,DT_FixedDUR2,RV_OK,TK_NotStart,SD-H-4-80,Second floor slab,,728,0,8,0,0,0,8,0,0,0,,,,2012-08-30 08:00,2012-08-30 16:00,,2012-05-16 08:00,2012-05-16 16:00,2012-05-16 08:00,2012-05-16 16:00,2012-05-16 08:00,2012-05-16 16:00,,2012-08-30 08:00,2012-08-30 16:00,,PT_Normal,,,,,fEGLA+sRf0uE2A+gz47deA,MeDJdvrHMkCuKKQwyHJquQ,,,N,0,0,,,2012-05-05 12:17,2012-05-16 14:02,admin,admin
32,129482,3769,19925,1191,1,100,N,N,N,CP_Drtn,TT_Task,DT_FixedDUR2,RV_OK,TK_Complete,SD-H-8&9-10,P.C footings,,,,0,0,0,0,8,0,0,0,,2012-03-28 00:00,2012-03-28 00:00,,,,,,,,2012-04-30 08:00,2012-04-30 16:00,,,,,PT_Normal,,,,,Ju9JwAHHiECW+EGtlybpGw,DJqmnZU+Ek6DC34w8gVqrg,,,N,0,0,,,2012-05-05 12:17,2012-05-16 14:02,admin,admin
33,129483,3769,19925,1191,1,100,N,N,N,CP_Drtn,TT_Task,DT_FixedDUR2,RV_OK,TK_Complete,SD-H-8&9-20,R.c footings,,,,0,0,0,0,8,0,0,0,,2012-04-13 00:00,2012-04-13 00:00,,,,,,,,2012-04-30 08:00,2012-04-30 16:00,,,,,PT_Normal,,,,,BwL+Lb7kKkWcWX7GFz+WeA,BnOWJkzkmUyFgM2G4Hz5UQ,,,N,0,0,,,2012-05-05 12:17,2012-05-16 14:02,admin,admin
34,129484,3769,19925,1191,1,100,N,N,N,CP_Drtn,TT_Task,DT_FixedDUR2,RV_OK,TK_Complete,SD-H-8&9-30,Ground floor columns,,,,0,0,0,0,8,0,0,0,,2012-04-25 00:00,2012-04-25 00:00,,,,,,,,2012-04-30 08:00,2012-04-30 16:00,,,,,PT_Normal,,,,,wWqFVkdms0KBt7KhJEP02Q,OLnKs9HZE0ewUj+o1GWNHg,,,N,0,0,,,2012-05-05 12:17,2012-05-16 14:02,admin,admin
35,129485,3769,19925,1191,1,0,N,N,N,CP_Drtn,TT_Task,DT_FixedDUR2,RV_OK,TK_NotStart,SD-H-8&9-40,Ground floor slabs,,992,0,8,0,0,0,8,0,0,0,,,,2012-10-08 08:00,2012-10-08 16:00,,2012-05-16 08:00,2012-05-16 16:00,2012-05-16 08:00,2012-05-16 16:00,2012-05-16 08:00,2012-05-16 16:00,,2012-10-08 08:00,2012-10-08 16:00,,PT_Normal,,,,,RpKql7K0kUK+IYB9QLDyrw,0Qq93sXlnkaNiBfr/agarw,,,N,0,0,,,2012-05-05 12:17,2012-05-16 14:02,admin,admin
36,129486,3769,19925,1191,1,0,N,N,N,CP_Drtn,TT_Task,DT_FixedDUR2,RV_OK,TK_NotStart,SD-H-8&9-50,first floor columns,,992,0,8,0,0,0,8,0,0,0,,,,2012-10-08 08:00,2012-10-08 16:00,,2012-05-16 08:00,2012-05-16 16:00,2012-05-16 08:00,2012-05-16 16:00,2012-05-16 08:00,2012-05-16 16:00,,2012-10-08 08:00,2012-10-08 16:00,,PT_Normal,,,,,q25pUx+QmEqeOh2Es7svaw,pqzkqsWJqkGtoblH/Sz1uQ,,,N,0,0,,,2012-05-05 12:17,2012-05-16 14:02,admin,admin
37,129487,3769,19925,1191,1,0,N,N,N,CP_Drtn,TT_Task,DT_FixedDUR2,RV_OK,TK_NotStart,SD-H-8&9-60,First floor slab,,480,0,8,0,0,0,8,0,0,0,,,,2012-07-25 08:00,2012-07-25 16:00,,2012-05-16 08:00,2012-05-16 16:00,2012-05-16 08:00,2012-05-16 16:00,2012-05-16 08:00,2012-05-16 16:00,,2012-07-25 08:00,2012-07-25 16:00,,PT_Normal,,,,,9U/q2GuWMEuqg651SiiTQQ,j+tqAi3yQUWirq+0jueTxw,,,N,0,0,,,2012-05-05 12:17,2012-05-16 14:02,admin,admin
38,129488,3769,19925,1191,1,0,N,N,N,CP_Drtn,TT_Task,DT_FixedDUR2,RV_OK,TK_NotStart,SD-H-8&9-70,Second floor columns,,632,0,8,0,0,0,8,0,0,0,,,,2012-08-16 08:00,2012-08-16 16:00,,2012-05-16 08:00,2012-05-16 16:00,2012-05-16 08:00,2012-05-16 16:00,2012-05-16 08:00,2012-05-16 16:00,,2012-08-16 08:00,2012-08-16 16:00,,PT_Normal,,,,,rXFBYROCq0OgrJ+4RmOGjQ,IJHlevO7pUaiW03q2sDoYA,,,N,0,0,,,2012-05-05 12:17,2012-05-16 14:02,admin,admin
39,129489,3769,19925,1191,1,0,N,N,N,CP_Drtn,TT_Task,DT_FixedDUR2,RV_OK,TK_NotStart,SD-H-8&9-80,Second floor slab,,728,0,8,0,0,0,8,0,0,0,,,,2012-08-30 08:00,2012-08-30 16:00,,2012-05-16 08:00,2012-05-16 16:00,2012-05-16 08:00,2012-05-16 16:00,2012-05-16 08:00,2012-05-16 16:00,,2012-08-30 08:00,2012-08-30 16:00,,PT_Normal,,,,,FSw7Gz4ea0G9VGNJbUraZQ,MeDJdvrHMkCuKKQwyHJquQ,,,N,0,0,,,2012-05-05 12:17,2012-05-16 14:02,admin,admin
40,129490,3769,19921,1191,1,100,N,N,N,CP_Drtn,TT_Task,DT_FixedDUR2,RV_OK,TK_Complete,SD-H-5&6-10,P.C footings,,,,0,0,0,0,8,0,0,0,,2012-03-27 00:00,2012-03-27 00:00,,,,,,,,2012-03-20 08:00,2012-03-20 16:00,,,,,PT_Normal,,,,,3kXadMM/rE6yLokVp//bBQ,DJqmnZU+Ek6DC34w8gVqrg,,,N,0,0,,,2012-05-05 12:17,2012-05-16 14:02,admin,admin
41,129491,3769,19921,1191,1,100,N,N,N,CP_Drtn,TT_Task,DT_FixedDUR2,RV_OK,TK_Complete,SD-H-5&6-20,R.c footings,,,,0,0,0,0,8,0,0,0,,2012-03-25 00:00,2012-03-25 00:00,,,,,,,,2012-03-24 08:00,2012-03-24 16:00,,,,,PT_Normal,,,,,CzIGUFaHXUCVKWznXUzb7w,BnOWJkzkmUyFgM2G4Hz5UQ,,,N,0,0,,,2012-05-05 12:17,2012-05-16 14:02,admin,admin
42,129492,3769,19921,1191,1,100,N,N,N,CP_Drtn,TT_Task,DT_FixedDUR2,RV_OK,TK_Complete,SD-H-5&6-30,Ground floor columns,,,,0,0,0,0,8,0,0,0,,2012-04-13 00:00,2012-04-13 00:00,,,,,,,,2012-05-05 08:00,2012-05-05 16:00,,,,,PT_Normal,,,,,HFzQGfs0JEq6nPHJLGL/hA,OLnKs9HZE0ewUj+o1GWNHg,,,N,0,0,,,2012-05-05 12:17,2012-05-16 14:02,admin,admin
43,129493,3769,19921,1191,1,100,N,N,N,CP_Drtn,TT_Task,DT_FixedDUR2,RV_OK,TK_Complete,SD-H-5&6-40,Ground floor slabs,,,,0,0,0,0,8,0,0,0,,2012-04-25 00:00,2012-04-25 00:00,,,,,,,,2012-04-30 08:00,2012-04-30 16:00,,,,,PT_Normal,,,,,d9iOsbGUF06tqE4DQntBDg,0Qq93sXlnkaNiBfr/agarw,,,N,0,0,,,2012-05-05 12:17,2012-05-16 14:02,admin,admin
44,129494,3769,19921,1191,1,100,N,N,N,CP_Drtn,TT_Task,DT_FixedDUR2,RV_OK,TK_Complete,SD-H-5&6-50,first floor columns,,,,0,0,0,0,8,0,0,0,,2012-04-28 00:00,2012-04-28 00:00,,,,,,,,2012-04-30 08:00,2012-04-30 16:00,,,,,PT_Normal,,,,,gr0U6nRg6E2q9OOxyky37g,pqzkqsWJqkGtoblH/Sz1uQ,,,N,0,0,,,2012-05-05 12:17,2012-05-16 14:02,admin,admin
45,129495,3769,19921,1191,1,100,N,N,N,CP_Drtn,TT_Task,DT_FixedDUR2,RV_OK,TK_Complete,SD-H-5&6-60,First floor slab,,,,0,0,0,0,8,0,0,0,,2012-05-09 00:00,2012-05-09 00:00,,,,,,,,2012-05-05 08:00,2012-05-05 16:00,,,,,PT_Normal,,,,,WIy8iP39C0aI+Vm7xoK3Fg,j+tqAi3yQUWirq+0jueTxw,,,N,0,0,,,2012-05-05 12:17,2012-05-16 14:02,admin,admin
46,129496,3769,19921,1191,1,0,N,N,N,CP_Drtn,TT_Task,DT_FixedDUR2,RV_OK,TK_NotStart,SD-H-5&6-70,Second floor columns,,632,0,8,0,0,0,8,0,0,0,,,,2012-08-16 08:00,2012-08-16 16:00,,2012-05-16 08:00,2012-05-16 16:00,2012-05-16 08:00,2012-05-16 16:00,2012-05-16 08:00,2012-05-16 16:00,,2012-08-16 08:00,2012-08-16 16:00,,PT_Normal,,,,,gSio7KptLU+hb6BZDkoUaw,IJHlevO7pUaiW03q2sDoYA,,,N,0,0,,,2012-05-05 12:17,2012-05-16 14:02,admin,admin
47,129497,3769,19921,1191,1,0,N,N,N,CP_Drtn,TT_Task,DT_FixedDUR2,RV_OK,TK_NotStart,SD-H-5&6-80,Second floor slab,,728,0,8,0,0,0,8,0,0,0,,,,2012-08-30 08:00,2012-08-30 16:00,,2012-05-16 08:00,2012-05-16 16:00,2012-05-16 08:00,2012-05-16 16:00,2012-05-16 08:00,2012-05-16 16:00,,2012-08-30 08:00,2012-08-30 16:00,,PT_Normal,,,,,s7m5vbocb0ucr0Fbg5YrJg,MeDJdvrHMkCuKKQwyHJquQ,,,N,0,0,,,2012-05-05 12:17,2012-05-16 14:02,admin,admin
48,129498,3769,19936,1191,1,100,N,N,N,CP_Drtn,TT_Task,DT_FixedDUR2,RV_OK,TK_Complete,AP-H-2-1,P.C footings,,,,0,0,0,0,8,0,0,0,,2012-03-18 00:00,2012-03-18 00:00,,,,,,,,2012-03-27 08:00,2012-03-27 16:00,,,,,PT_Normal,,,,,LcLuD0w9DkmSJGhoLmPELw,DJqmnZU+Ek6DC34w8gVqrg,,,N,0,0,,,2012-05-05 12:17,2012-05-16 14:02,admin,admin
49,129499,3769,19936,1191,1,100,N,N,N,CP_Drtn,TT_Task,DT_FixedDUR2,RV_OK,TK_Complete,AP-H-2-2,R.c footings,,,,0,0,0,0,8,0,0,0,,2012-04-08 00:00,2012-04-08 00:00,,,,,,,,2012-05-06 08:00,2012-05-06 16:00,,,,,PT_Normal,,,,,g6Z4qoClIEOh4oSmzl/Y5A,BnOWJkzkmUyFgM2G4Hz5UQ,,,N,0,0,,,2012-05-05 12:17,2012-05-16 14:02,admin,admin
50,129500,3769,19936,1191,1,0,N,N,N,CP_Drtn,TT_Task,DT_FixedDUR2,RV_OK,TK_NotStart,AP-H-2-3,Ground floor columns,,456,4,8,0,0,0,8,0,0,0,,,,2012-07-29 08:00,2012-07-29 16:00,,2012-05-23 08:00,2012-05-23 16:00,2012-05-23 08:00,2012-05-23 16:00,2012-05-23 08:00,2012-05-23 16:00,,2012-07-29 08:00,2012-07-29 16:00,,PT_Normal,,,,,Dd4ySuaDEkaWKxMBOvciyA,OLnKs9HZE0ewUj+o1GWNHg,,,N,0,0,,,2012-05-05 12:17,2012-05-16 14:02,admin,admin
51,129501,3769,19936,1191,1,100,N,N,N,CP_Drtn,TT_Task,DT_FixedDUR2,RV_OK,TK_Complete,AP-H-2-4,Ground floor slabs,,,,0,0,0,0,8,0,0,0,,2012-05-01 00:00,2012-05-01 00:00,,,,,,,,2012-05-11 08:00,2012-05-11 16:00,,,,,PT_Normal,,,,,+pQUH7kds0qRwrdVie9/VQ,0Qq93sXlnkaNiBfr/agarw,,,N,0,0,,,2012-05-05 12:17,2012-05-16 14:02,admin,admin
52,129502,3769,19936,1191,1,0,N,N,N,CP_Drtn,TT_Task,DT_FixedDUR2,RV_OK,TK_NotStart,AP-H-2-5,first floor columns,,608,152,8,0,0,0,8,0,0,0,,,,2012-08-20 08:00,2012-08-20 16:00,,2012-05-23 08:00,2012-05-23 16:00,2012-05-23 08:00,2012-05-23 16:00,2012-05-23 08:00,2012-05-23 16:00,,2012-08-20 08:00,2012-08-20 16:00,,PT_Normal,,,,,iBRDb4+it0OdD/l6XK5zUw,pqzkqsWJqkGtoblH/Sz1uQ,,,N,0,0,,,2012-05-05 12:17,2012-05-16 14:02,admin,admin
53,129503,3769,19936,1191,1,0,N,N,N,CP_Drtn,TT_Task,DT_FixedDUR2,RV_OK,TK_NotStart,AP-H-2-6,First floor slab,,672,212,8,0,0,0,8,0,0,0,,,,2012-08-29 08:00,2012-08-29 16:00,,2012-05-23 08:00,2012-05-23 16:00,2012-05-23 08:00,2012-05-23 16:00,2012-05-23 08:00,2012-05-23 16:00,,2012-08-29 08:00,2012-08-29 16:00,,PT_Normal,,,,,dsaypsvM0E+qPHQG3PdcNw,j+tqAi3yQUWirq+0jueTxw,,,N,0,0,,,2012-05-05 12:17,2012-05-16 14:02,admin,admin
54,129504,3769,19936,1191,1,0,N,N,N,CP_Drtn,TT_Task,DT_FixedDUR2,RV_OK,TK_NotStart,AP-H-2-7,Second floor columns,,760,300,8,0,0,0,8,0,0,0,,,,2012-09-11 08:00,2012-09-11 16:00,,2012-05-23 08:00,2012-05-23 16:00,2012-05-23 08:00,2012-05-23 16:00,2012-05-23 08:00,2012-05-23 16:00,,2012-09-11 08:00,2012-09-11 16:00,,PT_Normal,,,,,B7FZmiTUakm+IDEm67fhlQ,IJHlevO7pUaiW03q2sDoYA,,,N,0,0,,,2012-05-05 12:17,2012-05-16 14:02,admin,admin
55,129505,3769,19936,1191,1,0,N,N,N,CP_Drtn,TT_Task,DT_FixedDUR2,RV_OK,TK_NotStart,AP-H-2-8,Second floor slab,,816,356,8,0,0,0,8,0,0,0,,,,2012-09-19 08:00,2012-09-19 16:00,,2012-05-23 08:00,2012-05-23 16:00,2012-05-23 08:00,2012-05-23 16:00,2012-05-23 08:00,2012-05-23 16:00,,2012-09-19 08:00,2012-09-19 16:00,,PT_Normal,,,,,GsGKmt4VU0q0JiaF+lZi/g,MeDJdvrHMkCuKKQwyHJquQ,,,N,0,0,,,2012-05-05 12:17,2012-05-16 14:02,admin,admin
56,129506,3769,19918,1191,1,100,N,N,N,CP_Drtn,TT_Task,DT_FixedDUR2,RV_OK,TK_Complete,AP-C-1,Building 1,,,,0,0,0,0,8,0,0,0,,2012-03-29 00:00,2012-03-29 00:00,,,,,,,,2012-03-28 08:00,2012-03-28 16:00,,,,,PT_Normal,,,,,3R+80H7vI0axYAIcfBSFKQ,v9mpn5QHLU6sKxz4EkWfUg,,,N,0,0,,,2012-05-05 12:17,2012-05-16 14:02,admin,admin
57,129507,3769,19918,1191,1,100,N,N,N,CP_Drtn,TT_Task,DT_FixedDUR2,RV_OK,TK_Complete,AP-C-2,Building 2,,,,0,0,0,0,8,0,0,0,,2012-03-29 00:00,2012-03-29 00:00,,,,,,,,2012-03-28 08:00,2012-03-28 16:00,,,,,PT_Normal,,,,,vtL3pt+n1k290FmWmJpMmw,F2WZUdxJzUy5nxgPghx4dA,,,N,0,0,,,2012-05-05 12:17,2012-05-16 14:02,admin,admin
58,129508,3769,19918,1191,1,100,N,N,N,CP_Drtn,TT_Task,DT_FixedDUR2,RV_OK,TK_Complete,AP-C-3,Building 3,,,,0,0,0,0,8,0,0,0,,2012-03-29 00:00,2012-03-29 00:00,,,,,,,,2012-03-28 08:00,2012-03-28 16:00,,,,,PT_Normal,,,,,V7ESJGRAgEuefFIpiOk30w,Lg0245JqPU6y8thOeN4ZBQ,,,N,0,0,,,2012-05-05 12:17,2012-05-16 14:02,admin,admin
59,129509,3769,19918,1191,1,100,N,N,N,CP_Drtn,TT_Task,DT_FixedDUR2,RV_OK,TK_Complete,AP-C-4,Building 4,,,,0,0,0,0,8,0,0,0,,2012-03-29 00:00,2012-03-29 00:00,,,,,,,,2012-03-28 08:00,2012-03-28 16:00,,,,,PT_Normal,,,,,EYbyaIxvHkSoUw/SmKLKyQ,k+zAH7v0jUKjAwQJJRBKzg,,,N,0,0,,,2012-05-05 12:17,2012-05-16 14:02,admin,admin
60,129510,3769,19929,1191,1,100,N,N,N,CP_Drtn,TT_Task,DT_FixedDUR2,RV_OK,TK_Complete,AP-H-3-1,P.C footings,,,,0,0,0,0,8,0,0,0,,2012-03-18 00:00,2012-03-18 00:00,,,,,,,,2012-03-27 08:00,2012-03-27 16:00,,,,,PT_Normal,,,,,cnim/4Pg6EugIx4SWhdvGA,662GXNnMVkW02+5XzTLO6A,,,N,0,0,,,2012-05-05 12:17,2012-05-16 14:02,admin,admin
61,129511,3769,19929,1191,1,100,N,N,N,CP_Drtn,TT_Task,DT_FixedDUR2,RV_OK,TK_Complete,AP-H-3-2,R.c footings,,,,0,0,0,0,8,0,0,0,,2012-03-31 00:00,2012-03-31 00:00,,,,,,,,2012-03-31 08:00,2012-03-31 16:00,,,,,PT_Normal,,,,,xXfOY+h3nE2FGh4ID3YgDQ,KRAfRHc1JUm5ScwZ63KrBw,,,N,0,0,,,2012-05-05 12:17,2012-05-16 14:02,admin,admin
62,129512,3769,19929,1191,1,100,N,N,N,CP_Drtn,TT_Task,DT_FixedDUR2,RV_OK,TK_Complete,AP-H-3-3,Ground floor columns,,,,0,0,0,0,8,0,0,0,,2012-04-20 00:00,2012-04-20 00:00,,,,,,,,2012-05-06 08:00,2012-05-06 16:00,,,,,PT_Normal,,,,,z3+5tClSjkaCTw78HIOHUA,0Mvkb9yDAEyRUlYyaRkZ3Q,,,N,0,0,,,2012-05-05 12:17,2012-05-16 14:02,admin,admin
63,129513,3769,19929,1191,1,100,N,N,N,CP_Drtn,TT_Task,DT_FixedDUR2,RV_OK,TK_Complete,AP-H-3-4,Ground floor slabs,,,,0,0,0,0,8,0,0,0,,2012-04-26 00:00,2012-04-26 00:00,,,,,,,,2012-05-06 08:00,2012-05-06 16:00,,,,,PT_Normal,,,,,Tci7wfVMuUqoO9vIlNZdEQ,d/wjg3Sq2kCrZH2ISYl5Zg,,,N,0,0,,,2012-05-05 12:17,2012-05-16 14:02,admin,admin
64,129514,3769,19929,1191,1,100,N,N,N,CP_Drtn,TT_Task,DT_FixedDUR2,RV_OK,TK_Complete,AP-H-3-5,first floor columns,,,,0,0,0,0,8,0,0,0,,2012-04-29 00:00,2012-04-29 00:00,,,,,,,,2012-05-06 08:00,2012-05-06 16:00,,,,,PT_Normal,,,,,riHbH2K2406fpxraC+rsrg,9gzk8wpu+UmoCWKEtKNiUA,,,N,0,0,,,2012-05-05 12:17,2012-05-16 14:02,admin,admin
65,129515,3769,19929,1191,1,100,N,N,N,CP_Drtn,TT_Task,DT_FixedDUR2,RV_OK,TK_Complete,AP-H-3-6,First floor slab,,,,0,0,0,0,8,0,0,0,,2012-05-09 00:00,2012-05-09 00:00,,,,,,,,2012-05-11 08:00,2012-05-11 16:00,,,,,PT_Normal,,,,,KjB8jRRN3UmgZMR5fFAekg,MnT32apXrkypkqWWOgvAPw,,,N,0,0,,,2012-05-05 12:17,2012-05-16 14:02,admin,admin
66,129516,3769,19929,1191,1,0,N,N,N,CP_Drtn,TT_Task,DT_FixedDUR2,RV_OK,TK_NotStart,AP-H-3-7,Second floor columns,,632,0,8,0,0,0,8,0,0,0,,,,2012-08-23 08:00,2012-08-23 16:00,,2012-05-23 08:00,2012-05-23 16:00,2012-05-23 08:00,2012-05-23 16:00,2012-05-23 08:00,2012-05-23 16:00,,2012-08-23 08:00,2012-08-23 16:00,,PT_Normal,,,,,0G7UKO9BRU2Gh4SbsJtlLg,sfgbIM53M0yqic8sAAMEWw,,,N,0,0,,,2012-05-05 12:17,2012-05-16 14:02,admin,admin
67,129517,3769,19929,1191,1,0,N,N,N,CP_Drtn,TT_Task,DT_FixedDUR2,RV_OK,TK_NotStart,AP-H-3-8,Second floor slab,,728,96,8,0,0,0,8,0,0,0,,,,2012-09-06 08:00,2012-09-06 16:00,,2012-05-23 08:00,2012-05-23 16:00,2012-05-23 08:00,2012-05-23 16:00,2012-05-23 08:00,2012-05-23 16:00,,2012-09-06 08:00,2012-09-06 16:00,,PT_Normal,,,,,Ru6CkZIObU2SHRG2EbtdZQ,4uGTf/Aus0mHldqNAV4G0Q,,,N,0,0,,,2012-05-05 12:17,2012-05-16 14:02,admin,admin
68,129518,3769,19924,1191,1,100,N,N,N,CP_Drtn,TT_Task,DT_FixedDUR2,RV_OK,TK_Complete,AP-H-4-1,P.C footings,,,,0,0,0,0,8,0,0,0,,2012-03-18 00:00,2012-03-18 00:00,,,,,,,,2012-03-27 08:00,2012-03-27 16:00,,,,,PT_Normal,,,,,U7Vmp8gsM0qODT1fqN0I+Q,uFJd05kYf0uWiJ14zVz+gg,,,N,0,0,,,2012-05-05 12:17,2012-05-16 14:02,admin,admin
69,129519,3769,19924,1191,1,100,N,N,N,CP_Drtn,TT_Task,DT_FixedDUR2,RV_OK,TK_Complete,AP-H-4-2,R.c footings,,,,0,0,0,0,8,0,0,0,,2012-03-27 00:00,2012-03-27 00:00,,,,,,,,2012-03-31 08:00,2012-03-31 16:00,,,,,PT_Normal,,,,,I/ekwoDNa0mYfjFYg7pekg,J1Qy+VqWi0il+8gO7IaepQ,,,N,0,0,,,2012-05-05 12:17,2012-05-16 14:02,admin,admin
70,129520,3769,19924,1191,1,100,N,N,N,CP_Drtn,TT_Task,DT_FixedDUR2,RV_OK,TK_Complete,AP-H-4-3,Ground floor columns,,,,0,0,0,0,8,0,0,0,,2012-04-15 00:00,2012-04-15 00:00,,,,,,,,2012-05-11 08:00,2012-05-11 16:00,,,,,PT_Normal,,,,,326DA8KwMUG8z1+LuIIO4g,jitWDunpYUyrW8CReDv7vA,,,N,0,0,,,2012-05-05 12:17,2012-05-16 14:02,admin,admin
71,129521,3769,19924,1191,1,100,N,N,N,CP_Drtn,TT_Task,DT_FixedDUR2,RV_OK,TK_Complete,AP-H-4-4,Ground floor slabs,,,,0,0,0,0,8,0,0,0,,2012-05-01 00:00,2012-05-01 00:00,,,,,,,,2012-05-04 08:00,2012-05-04 16:00,,,,,PT_Normal,,,,,Y9uyIRk5MUW0hgFMkzItAg,0ZR51mX0r0OygS4WUAOfFg,,,N,0,0,,,2012-05-05 12:17,2012-05-16 14:02,admin,admin
72,129522,3769,19924,1191,1,100,N,N,N,CP_Drtn,TT_Task,DT_FixedDUR2,RV_OK,TK_Complete,AP-H-4-5,first floor columns,,,,0,0,0,0,8,0,0,0,,2012-04-29 00:00,2012-04-29 00:00,,,,,,,,2012-05-03 08:00,2012-05-03 16:00,,,,,PT_Normal,,,,,4yjVB270KUW6XDASfnuVmg,Q9IZVwki6UWXMVtQAbTE7A,,,N,0,0,,,2012-05-05 12:17,2012-05-16 14:02,admin,admin
73,129523,3769,19924,1191,1,0,N,N,N,CP_Drtn,TT_Task,DT_FixedDUR2,RV_OK,TK_NotStart,AP-H-4-6,First floor slab,,528,64,8,0,0,0,8,0,0,0,,,,2012-08-01 08:00,2012-08-01 16:00,,2012-05-16 08:00,2012-05-16 16:00,2012-05-16 08:00,2012-05-16 16:00,2012-05-16 08:00,2012-05-16 16:00,,2012-08-01 08:00,2012-08-01 16:00,,PT_Normal,,,,,PRN1L/pdRk6Xs6a26O0PKA,cjEuxvH6q02nY8FANopkBA,,,N,0,0,,,2012-05-05 12:17,2012-05-16 14:02,admin,admin
74,129524,3769,19924,1191,1,0,N,N,N,CP_Drtn,TT_Task,DT_FixedDUR2,RV_OK,TK_NotStart,AP-H-4-7,Second floor columns,,632,168,8,0,0,0,8,0,0,0,,,,2012-08-23 08:00,2012-08-23 16:00,,2012-05-23 08:00,2012-05-23 16:00,2012-05-23 08:00,2012-05-23 16:00,2012-05-23 08:00,2012-05-23 16:00,,2012-08-23 08:00,2012-08-23 16:00,,PT_Normal,,,,,AaeIKPgg80KcrF7Xrd3Ygg,nzEQO26k4kGb4b46AZbitw,,,N,0,0,,,2012-05-05 12:17,2012-05-16 14:02,admin,admin
75,129525,3769,19924,1191,1,0,N,N,N,CP_Drtn,TT_Task,DT_FixedDUR2,RV_OK,TK_NotStart,AP-H-4-8,Second floor slab,,728,264,8,0,0,0,8,0,0,0,,,,2012-09-06 08:00,2012-09-06 16:00,,2012-05-23 08:00,2012-05-23 16:00,2012-05-23 08:00,2012-05-23 16:00,2012-05-23 08:00,2012-05-23 16:00,,2012-09-06 08:00,2012-09-06 16:00,,PT_Normal,,,,,1J3DoKAHHk+9zmG4sJ8UGA,1D/VJDLFMUG11r3RxhX2Sg,,,N,0,0,,,2012-05-05 12:17,2012-05-16 14:02,admin,admin
76,129526,3769,19935,1191,1,0,N,N,N,CP_Drtn,TT_Task,DT_FixedDUR2,RV_OK,TK_NotStart,AP-H-8&9-1,P.C footings,,1040,1040,8,0,0,0,8,0,0,0,,,,2012-10-15 08:00,2012-10-15 16:00,,2012-05-16 08:00,2012-05-16 16:00,2012-05-16 08:00,2012-05-16 16:00,2012-05-16 08:00,2012-05-16 16:00,,2012-10-15 08:00,2012-10-15 16:00,,PT_Normal,,,,,v3sJTKZet0uWdlCsJZ/Jxg,2X3Qu+wCYke0QdaX8RLc2Q,,,N,0,0,,,2012-05-05 12:17,2012-05-16 14:02,admin,admin
77,129527,3769,19935,1191,1,100,N,N,N,CP_Drtn,TT_Task,DT_FixedDUR2,RV_OK,TK_Complete,AP-H-8&9-2,R.c footings,,,,0,0,0,0,8,0,0,0,,2012-04-15 00:00,2012-04-15 00:00,,,,,,,,2012-05-06 08:00,2012-05-06 16:00,,,,,PT_Normal,,,,,vaAc1lbHDEqlATJBd6dMyw,C0Lg5Di3X0mGUyjXKiV1rg,,,N,0,0,,,2012-05-05 12:17,2012-05-16 14:02,admin,admin
78,129528,3769,19935,1191,1,100,N,N,N,CP_Drtn,TT_Task,DT_FixedDUR2,RV_OK,TK_Complete,AP-H-8&9-3,Ground floor columns,,,,0,0,0,0,8,0,0,0,,2012-04-29 00:00,2012-04-29 00:00,,,,,,,,2012-05-06 08:00,2012-05-06 16:00,,,,,PT_Normal,,,,,8qW5YRB3/0ektM+TllAV6w,aJuXVPpGbECA1qZwccgs2g,,,N,0,0,,,2012-05-05 12:17,2012-05-16 14:02,admin,admin
79,129529,3769,19935,1191,1,0,N,N,N,CP_Drtn,TT_Task,DT_FixedDUR2,RV_OK,TK_NotStart,AP-H-8&9-4,Ground floor slabs,,992,992,8,0,0,0,8,0,0,0,,,,2012-10-15 08:00,2012-10-15 16:00,,2012-05-23 08:00,2012-05-23 16:00,2012-05-23 08:00,2012-05-23 16:00,2012-05-23 08:00,2012-05-23 16:00,,2012-10-15 08:00,2012-10-15 16:00,,PT_Normal,,,,,eYtSTediMkqlEvpqwLYebg,+J5g/GeQf0qNwIYoO8/xFg,,,N,0,0,,,2012-05-05 12:17,2012-05-16 14:02,admin,admin
80,129530,3769,19935,1191,1,0,N,N,N,CP_Drtn,TT_Task,DT_FixedDUR2,RV_OK,TK_NotStart,AP-H-8&9-5,first floor columns,,992,992,8,0,0,0,8,0,0,0,,,,2012-10-15 08:00,2012-10-15 16:00,,2012-05-23 08:00,2012-05-23 16:00,2012-05-23 08:00,2012-05-23 16:00,2012-05-23 08:00,2012-05-23 16:00,,2012-10-15 08:00,2012-10-15 16:00,,PT_Normal,,,,,+b5/f079akm/eo60bhS/qw,ArombQjJyUOxVOxRLnMloQ,,,N,0,0,,,2012-05-05 12:17,2012-05-16 14:02,admin,admin
81,129531,3769,19935,1191,1,0,N,N,N,CP_Drtn,TT_Task,DT_FixedDUR2,RV_OK,TK_NotStart,AP-H-8&9-6,First floor slab,,480,0,8,0,0,0,8,0,0,0,,,,2012-08-01 08:00,2012-08-01 16:00,,2012-05-23 08:00,2012-05-23 16:00,2012-05-23 08:00,2012-05-23 16:00,2012-05-23 08:00,2012-05-23 16:00,,2012-08-01 08:00,2012-08-01 16:00,,PT_Normal,,,,,cLU4/3Jw8kGsjXWlLMHBUQ,E53KprwW40u3Ge5cme2qSg,,,N,0,0,,,2012-05-05 12:17,2012-05-16 14:02,admin,admin
82,129532,3769,19935,1191,1,0,N,N,N,CP_Drtn,TT_Task,DT_FixedDUR2,RV_OK,TK_NotStart,AP-H-8&9-7,Second floor columns,,632,44,8,0,0,0,8,0,0,0,,,,2012-08-23 08:00,2012-08-23 16:00,,2012-05-23 08:00,2012-05-23 16:00,2012-05-23 08:00,2012-05-23 16:00,2012-05-23 08:00,2012-05-23 16:00,,2012-08-23 08:00,2012-08-23 16:00,,PT_Normal,,,,,C/2MS5SYl0GMqq3Dt1y9yw,k2MgmId3zE2mXknjGsSAYA,,,N,0,0,,,2012-05-05 12:17,2012-05-16 14:02,admin,admin
83,129533,3769,19935,1191,1,0,N,N,N,CP_Drtn,TT_Task,DT_FixedDUR2,RV_OK,TK_NotStart,AP-H-8&9-8,Second floor slab,,728,140,8,0,0,0,8,0,0,0,,,,2012-09-06 08:00,2012-09-06 16:00,,2012-05-23 08:00,2012-05-23 16:00,2012-05-23 08:00,2012-05-23 16:00,2012-05-23 08:00,2012-05-23 16:00,,2012-09-06 08:00,2012-09-06 16:00,,PT_Normal,,,,,AM96USUdM0C2P2LDZHFKKA,JCHpVdvTfECUpc/3BBTwcg,,,N,0,0,,,2012-05-05 12:17,2012-05-16 14:02,admin,admin
84,129534,3769,19957,1191,1,100,N,N,N,CP_Drtn,TT_Task,DT_FixedDUR2,RV_OK,TK_Complete,AP-H-5&6-1,P.C footings,,,,0,0,0,0,8,0,0,0,,2012-03-31 00:00,2012-03-31 00:00,,,,,,,,2012-03-27 08:00,2012-03-27 16:00,,,,,PT_Normal,,,,,/0Z2goYF80uI40XmHSj6Bw,oYlie0wvVEmeGSlK0NtKSQ,,,N,0,0,,,2012-05-05 12:17,2012-05-16 14:02,admin,admin
85,129535,3769,19957,1191,1,100,N,N,N,CP_Drtn,TT_Task,DT_FixedDUR2,RV_OK,TK_Complete,AP-H-5&6-2,R.c footings,,,,0,0,0,0,8,0,0,0,,2012-03-27 00:00,2012-03-27 00:00,,,,,,,,2012-03-31 08:00,2012-03-31 16:00,,,,,PT_Normal,,,,,tP3aZDQn90m2nMy08A1ALQ,CZUvSWe/mUKXLfgVxavnAg,,,N,0,0,,,2012-05-05 12:17,2012-05-16 14:02,admin,admin
86,129536,3769,19957,1191,1,100,N,N,N,CP_Drtn,TT_Task,DT_FixedDUR2,RV_OK,TK_Complete,AP-H-5&6-3,Ground floor columns,,,,0,0,0,0,8,0,0,0,,2012-04-15 00:00,2012-04-15 00:00,,,,,,,,2012-05-11 08:00,2012-05-11 16:00,,,,,PT_Normal,,,,,8wsTRePUc0OYDz29kDP6ig,pubHi35Q7kWYFL9J7O+O7A,,,N,0,0,,,2012-05-05 12:17,2012-05-16 14:02,admin,admin
87,129537,3769,19957,1191,1,100,N,N,N,CP_Drtn,TT_Task,DT_FixedDUR2,RV_OK,TK_Complete,AP-H-5&6-4,Ground floor slabs,,,,0,0,0,0,8,0,0,0,,2012-04-26 00:00,2012-04-26 00:00,,,,,,,,2012-05-06 08:00,2012-05-06 16:00,,,,,PT_Normal,,,,,Id+FHtVyzkiMy0lN0Q3DLg,BWfz6pA7sku57DkLvT4LmA,,,N,0,0,,,2012-05-05 12:17,2012-05-16 14:02,admin,admin
88,129538,3769,19957,1191,1,100,N,N,N,CP_Drtn,TT_Task,DT_FixedDUR2,RV_OK,TK_Complete,AP-H-5&6-5,first floor columns,,,,0,0,0,0,8,0,0,0,,2012-04-29 00:00,2012-04-29 00:00,,,,,,,,2012-05-03 08:00,2012-05-03 16:00,,,,,PT_Normal,,,,,eaet5KKP1kmDmZ8hBYVzEw,fduIniRpcUmQqqTPbygopw,,,N,0,0,,,2012-05-05 12:17,2012-05-16 14:02,admin,admin
89,129539,3769,19957,1191,1,100,N,N,N,CP_Drtn,TT_Task,DT_FixedDUR2,RV_OK,TK_Complete,AP-H-5&6-6,First floor slab,,,,0,0,0,0,8,0,0,0,,2012-05-10 00:00,2012-05-10 00:00,,,,,,,,2012-05-11 08:00,2012-05-11 16:00,,,,,PT_Normal,,,,,vsydAX4XZku5CHMcH85vLw,DNlYMGCaTEWJusQc+uYzsQ,,,N,0,0,,,2012-05-05 12:17,2012-05-16 14:02,admin,admin
90,129540,3769,19957,1191,1,0,N,N,N,CP_Drtn,TT_Task,DT_FixedDUR2,RV_OK,TK_NotStart,AP-H-5&6-7,Second floor columns,,632,0,8,0,0,0,8,0,0,0,,,,2012-08-23 08:00,2012-08-23 16:00,,2012-05-23 08:00,2012-05-23 16:00,2012-05-23 08:00,2012-05-23 16:00,2012-05-23 08:00,2012-05-23 16:00,,2012-08-23 08:00,2012-08-23 16:00,,PT_Normal,,,,,496sxYIGK0mbTnPwp+9gfw,i1+PsncK5EWRhn4QgrHhPg,,,N,0,0,,,2012-05-05 12:17,2012-05-16 14:02,admin,admin
91,129541,3769,19957,1191,1,0,N,N,N,CP_Drtn,TT_Task,DT_FixedDUR2,RV_OK,TK_NotStart,AP-H-5&6-8,Second floor slab,,728,96,8,0,0,0,8,0,0,0,,,,2012-09-06 08:00,2012-09-06 16:00,,2012-05-23 08:00,2012-05-23 16:00,2012-05-23 08:00,2012-05-23 16:00,2012-05-23 08:00,2012-05-23 16:00,,2012-09-06 08:00,2012-09-06 16:00,,PT_Normal,,,,,BKbGUo4jL0OORHMlJY9d2A,Zoz1UjtHn0iGjjAVRjgkZA,,,N,0,0,,,2012-05-05 12:17,2012-05-16 14:02,admin,admin
92,129542,3769,19913,1191,0,100,N,N,N,CP_Drtn,TT_Mile,DT_FixedDrtn,RV_OK,TK_Complete,DD-H-5&6,Building 5&6,,,,0,0,0,0,0,0,0,0,,2012-03-21 00:00,2012-03-21 00:00,,,,,,,,2012-03-18 08:00,2012-03-18 08:00,,,,,PT_Normal,,,,,rAaoevZCd0a8/dX4/4r26Q,,,,N,0,0,,,2012-05-05 12:17,2012-05-16 14:02,admin,admin
93,129543,3769,19913,1191,0,100,N,N,N,CP_Drtn,TT_Mile,DT_FixedDrtn,RV_OK,TK_Complete,DD-H-8&9,Building 8&9,,,,0,0,0,0,0,0,0,0,,2012-03-28 00:00,2012-03-28 00:00,,,,,,,,2012-03-18 08:00,2012-03-18 08:00,,,,,PT_Normal,,,,,NtQlPcP2rEq0GVqyb5Wf3g,,,,N,0,0,,,2012-05-05 12:17,2012-05-16 14:02,admin,admin
94,129544,3769,19913,1191,0,100,N,N,N,CP_Drtn,TT_Mile,DT_FixedDrtn,RV_OK,TK_Complete,DD-H-10&11,Building 10&11,,,,0,0,0,0,0,0,0,0,,2012-03-18 00:00,2012-03-18 00:00,,,,,,,,2012-03-18 08:00,2012-03-18 08:00,,,,,PT_Normal,,,,,4Nc4exxDU0uM79EZDDEoPg,,,,N,0,0,,,2012-05-05 12:17,2012-05-16 14:02,admin,admin
95,129545,3769,19913,1191,0,100,N,N,N,CP_Drtn,TT_Mile,DT_FixedDrtn,RV_OK,TK_Complete,DD-H-1,Building 1,,,,0,0,0,0,0,0,0,0,,2012-03-18 00:00,2012-03-18 00:00,,,,,,,,2012-03-18 08:00,2012-03-18 08:00,,,,,PT_Normal,,,,,yGYBBkKYJ0u4MdZMtNP0rg,,,,N,0,0,,,2012-05-05 12:17,2012-05-16 14:02,admin,admin
96,129546,3769,19913,1191,0,0,N,N,N,CP_Drtn,TT_Mile,DT_FixedDrtn,RV_OK,TK_NotStart,DD-H-12,Building 12,,16,0,0,0,0,0,0,0,0,0,,,,2012-05-19 08:00,2012-05-19 08:00,,2012-05-16 08:00,2012-05-16 08:00,2012-05-16 08:00,2012-05-16 08:00,2012-05-16 08:00,2012-05-16 08:00,,2012-05-19 08:00,2012-05-19 08:00,,PT_Normal,,,,,zGjESwL46Eaa2btgLKOXPA,,,,N,0,0,,,2012-05-05 12:17,2012-05-16 14:02,admin,admin
97,129547,3769,19913,1191,0,100,N,N,N,CP_Drtn,TT_Mile,DT_FixedDrtn,RV_OK,TK_Complete,DD-H-2,Building 2,,,,0,0,0,0,0,0,0,0,,2012-03-18 00:00,2012-03-18 00:00,,,,,,,,2012-03-18 08:00,2012-03-18 08:00,,,,,PT_Normal,,,,,756AiSR67UWApWTNMRrdpg,,,,N,0,0,,,2012-05-05 12:17,2012-05-16 14:02,admin,admin
98,129548,3769,19913,1191,0,100,N,N,N,CP_Drtn,TT_Mile,DT_FixedDrtn,RV_OK,TK_Complete,DD-H-3,Building 3,,,,0,0,0,0,0,0,0,0,,2012-03-18 00:00,2012-03-18 00:00,,,,,,,,2012-03-18 08:00,2012-03-18 08:00,,,,,PT_Normal,,,,,0hWTvLWG0Ee1HUunbr80Eg,,,,N,0,0,,,2012-05-05 12:17,2012-05-16 14:02,admin,admin
99,129549,3769,19942,1191,1,100,N,N,N,CP_Drtn,TT_Task,DT_FixedDUR2,RV_OK,TK_Complete,SD-H-10&11-10,P.C footings,,,,0,0,0,0,8,0,0,0,,2012-03-18 00:00,2012-03-18 00:00,,,,,,,,2012-03-20 08:00,2012-03-20 16:00,,,,,PT_Normal,,,,,GmRyA3zVp0+5EoVyrTQa4w,oYlie0wvVEmeGSlK0NtKSQ,,,N,0,0,,,2012-05-05 12:17,2012-05-16 14:02,admin,admin
100,129550,3769,19942,1191,1,100,N,N,N,CP_Drtn,TT_Task,DT_FixedDUR2,RV_OK,TK_Complete,SD-H-10&11-20,R.c footings,,,,0,0,0,0,8,0,0,0,,2012-03-27 00:00,2012-03-27 00:00,,,,,,,,2012-03-24 08:00,2012-03-24 16:00,,,,,PT_Normal,,,,,6Yfo4KCtz0aZRlsB2MqE7w,CZUvSWe/mUKXLfgVxavnAg,,,N,0,0,,,2012-05-05 12:17,2012-05-16 14:02,admin,admin
101,129551,3769,19942,1191,1,100,N,N,N,CP_Drtn,TT_Task,DT_FixedDUR2,RV_OK,TK_Complete,SD-H-10&11-30,Ground floor columns,,,,0,0,0,0,8,0,0,0,,2012-04-25 00:00,2012-04-25 00:00,,,,,,,,2012-04-30 08:00,2012-04-30 16:00,,,,,PT_Normal,,,,,OZgXtF5SW0mfYdG2OSxRPA,pubHi35Q7kWYFL9J7O+O7A,,,N,0,0,,,2012-05-05 12:17,2012-05-16 14:02,admin,admin
102,129552,3769,19942,1191,1,100,N,N,N,CP_Drtn,TT_Task,DT_FixedDUR2,RV_OK,TK_Complete,SD-H-10&11-40,Ground floor slabs,,,,0,0,0,0,8,0,0,0,,2012-04-29 00:00,2012-04-29 00:00,,,,,,,,2012-04-30 08:00,2012-04-30 16:00,,,,,PT_Normal,,,,,1IBTqphxK02S6EKX19yKvA,BWfz6pA7sku57DkLvT4LmA,,,N,0,0,,,2012-05-05 12:17,2012-05-16 14:02,admin,admin
103,129553,3769,19942,1191,1,0,N,N,N,CP_Drtn,TT_Task,DT_FixedDUR2,RV_OK,TK_NotStart,SD-H-10&11-50,first floor columns,,576,0,8,0,0,0,8,0,0,0,,,,2012-08-08 08:00,2012-08-08 16:00,,2012-05-16 08:00,2012-05-16 16:00,2012-05-16 08:00,2012-05-16 16:00,2012-05-16 08:00,2012-05-16 16:00,,2012-08-08 08:00,2012-08-08 16:00,,PT_Normal,,,,,iMKL22UTVUqMharOEXxgIA,fduIniRpcUmQqqTPbygopw,,,N,0,0,,,2012-05-05 12:17,2012-05-16 14:02,admin,admin
104,129554,3769,19942,1191,1,100,N,N,N,CP_Drtn,TT_Task,DT_FixedDUR2,RV_OK,TK_Complete,SD-H-10&11-60,First floor slab,,,,0,0,0,0,8,0,0,0,,2012-05-07 00:00,2012-05-07 00:00,,,,,,,,2012-05-05 08:00,2012-05-05 16:00,,,,,PT_Normal,,,,,kRUfxqW8Y065QBEezOdGHQ,DNlYMGCaTEWJusQc+uYzsQ,,,N,0,0,,,2012-05-05 12:17,2012-05-16 14:02,admin,admin
105,129555,3769,19942,1191,1,0,N,N,N,CP_Drtn,TT_Task,DT_FixedDUR2,RV_OK,TK_NotStart,SD-H-10&11-70,Second floor columns,,632,0,8,0,0,0,8,0,0,0,,,,2012-08-16 08:00,2012-08-16 16:00,,2012-05-16 08:00,2012-05-16 16:00,2012-05-16 08:00,2012-05-16 16:00,2012-05-16 08:00,2012-05-16 16:00,,2012-08-16 08:00,2012-08-16 16:00,,PT_Normal,,,,,YxLP6G3fRkSlRd56PE9Fsg,i1+PsncK5EWRhn4QgrHhPg,,,N,0,0,,,2012-05-05 12:17,2012-05-16 14:02,admin,admin
106,129556,3769,19942,1191,1,0,N,N,N,CP_Drtn,TT_Task,DT_FixedDUR2,RV_OK,TK_NotStart,SD-H-10&11-80,Second floor slab,,728,0,8,0,0,0,8,0,0,0,,,,2012-08-30 08:00,2012-08-30 16:00,,2012-05-16 08:00,2012-05-16 16:00,2012-05-16 08:00,2012-05-16 16:00,2012-05-16 08:00,2012-05-16 16:00,,2012-08-30 08:00,2012-08-30 16:00,,PT_Normal,,,,,XsoIihZgqkurc9Tb4Hn3Rw,Zoz1UjtHn0iGjjAVRjgkZA,,,N,0,0,,,2012-05-05 12:17,2012-05-16 14:02,admin,admin
107,129557,3769,19934,1191,1,100,N,N,N,CP_Drtn,TT_Task,DT_FixedDUR2,RV_OK,TK_Complete,AP-H-10&11-1,P.C footings,,,,0,0,0,0,8,0,0,0,,2012-03-21 00:00,2012-03-21 00:00,,,,,,,,2012-03-27 08:00,2012-03-27 16:00,,,,,PT_Normal,,,,,1lRZz2wQN0WVFZYPW0kBnw,oYlie0wvVEmeGSlK0NtKSQ,,,N,0,0,,,2012-05-05 12:17,2012-05-16 14:02,admin,admin
108,129558,3769,19934,1191,1,100,N,N,N,CP_Drtn,TT_Task,DT_FixedDUR2,RV_OK,TK_Complete,AP-H-10&11-2,R.c footings,,,,0,0,0,0,8,0,0,0,,2012-03-31 00:00,2012-03-31 00:00,,,,,,,,2012-03-31 08:00,2012-03-31 16:00,,,,,PT_Normal,,,,,cvux7klrgk+qr+L9OT0hWA,CZUvSWe/mUKXLfgVxavnAg,,,N,0,0,,,2012-05-05 12:17,2012-05-16 14:02,admin,admin
109,129559,3769,19934,1191,1,100,N,N,N,CP_Drtn,TT_Task,DT_FixedDUR2,RV_OK,TK_Complete,AP-H-10&11-3,Ground floor columns,,,,0,0,0,0,8,0,0,0,,2012-04-29 00:00,2012-04-29 00:00,,,,,,,,2012-05-06 08:00,2012-05-06 16:00,,,,,PT_Normal,,,,,oIfb3nC75kO1BHf74v6zQg,pubHi35Q7kWYFL9J7O+O7A,,,N,0,0,,,2012-05-05 12:17,2012-05-16 14:02,admin,admin
110,129560,3769,19934,1191,1,100,N,N,N,CP_Drtn,TT_Task,DT_FixedDUR2,RV_OK,TK_Complete,AP-H-10&11-4,Ground floor slabs,,,,0,0,0,0,8,0,0,0,,2012-05-01 00:00,2012-05-01 00:00,,,,,,,,2012-05-06 08:00,2012-05-06 16:00,,,,,PT_Normal,,,,,LnplUBkDlUqYmIgWsAJdfA,BWfz6pA7sku57DkLvT4LmA,,,N,0,0,,,2012-05-05 12:17,2012-05-16 14:02,admin,admin
111,129561,3769,19934,1191,1,0,N,N,N,CP_Drtn,TT_Task,DT_FixedDUR2,RV_OK,TK_NotStart,AP-H-10&11-5,first floor columns,,576,0,8,0,0,0,8,0,0,0,,,,2012-08-15 08:00,2012-08-15 16:00,,2012-05-23 08:00,2012-05-23 16:00,2012-05-23 08:00,2012-05-23 16:00,2012-05-23 08:00,2012-05-23 16:00,,2012-08-15 08:00,2012-08-15 16:00,,PT_Normal,,,,,saOOq5iyGkSlUGiATjWAEw,fduIniRpcUmQqqTPbygopw,,,N,0,0,,,2012-05-05 12:17,2012-05-16 14:02,admin,admin
112,129562,3769,19934,1191,1,100,N,N,N,CP_Drtn,TT_Task,DT_FixedDUR2,RV_OK,TK_Complete,AP-H-10&11-6,First floor slab,,,,0,0,0,0,8,0,0,0,,2012-05-09 00:00,2012-05-09 00:00,,,,,,,,2012-05-11 08:00,2012-05-11 16:00,,,,,PT_Normal,,,,,qyE0Zxrm2EuwjXgb0+pVbg,DNlYMGCaTEWJusQc+uYzsQ,,,N,0,0,,,2012-05-05 12:17,2012-05-16 14:02,admin,admin
113,129563,3769,19934,1191,1,0,N,N,N,CP_Drtn,TT_Task,DT_FixedDUR2,RV_OK,TK_NotStart,AP-H-10&11-7,Second floor columns,,632,0,8,0,0,0,8,0,0,0,,,,2012-08-23 08:00,2012-08-23 16:00,,2012-05-23 08:00,2012-05-23 16:00,2012-05-23 08:00,2012-05-23 16:00,2012-05-23 08:00,2012-05-23 16:00,,2012-08-23 08:00,2012-08-23 16:00,,PT_Normal,,,,,de/vTvCKc0uzI0HmFW3nSw,i1+PsncK5EWRhn4QgrHhPg,,,N,0,0,,,2012-05-05 12:17,2012-05-16 14:02,admin,admin
114,129564,3769,19934,1191,1,0,N,N,N,CP_Drtn,TT_Task,DT_FixedDUR2,RV_OK,TK_NotStart,AP-H-10&11-8,Second floor slab,,728,96,8,0,0,0,8,0,0,0,,,,2012-09-06 08:00,2012-09-06 16:00,,2012-05-23 08:00,2012-05-23 16:00,2012-05-23 08:00,2012-05-23 16:00,2012-05-23 08:00,2012-05-23 16:00,,2012-09-06 08:00,2012-09-06 16:00,,PT_Normal,,,,,/Ocn21q9/Eebon0csehWLA,Zoz1UjtHn0iGjjAVRjgkZA,,,N,0,0,,,2012-05-05 12:17,2012-05-16 14:02,admin,admin
115,129565,3769,19913,1191,0,100,N,N,N,CP_Drtn,TT_Mile,DT_FixedDrtn,RV_OK,TK_Complete,DD-H-4,Building 4,,,,0,0,0,0,0,0,0,0,,2012-03-21 00:00,2012-03-21 00:00,,,,,,,,2012-03-18 08:00,2012-03-18 08:00,,,,,PT_Normal,,,,,4tu1/m7O+0Cv7XDnbDQVaA,,,,N,0,0,,,2012-05-05 12:17,2012-05-16 14:02,admin,admin
116,129566,3769,19913,1191,0,0,N,N,N,CP_Drtn,TT_Mile,DT_FixedDrtn,RV_OK,TK_NotStart,DD-H-7,Building 7,,0,0,0,0,0,0,0,0,0,0,,,,2012-05-16 08:00,2012-05-16 08:00,,2012-05-16 08:00,2012-05-16 08:00,2012-05-16 08:00,2012-05-16 08:00,2012-05-16 08:00,2012-05-16 08:00,,2012-05-16 08:00,2012-05-16 08:00,,PT_Normal,,,,,jzayHB/s1ECV3MLoIE+hKA,,,,Y,0,0,,,2012-05-05 12:17,2012-05-16 14:02,admin,admin
117,129567,3769,19926,1191,1,100,N,N,N,CP_Drtn,TT_Task,DT_FixedDUR2,RV_OK,TK_Complete,SD-H-1-10,P.C footings,,,,0,0,0,0,8,0,0,0,,2012-03-18 00:00,2012-03-18 00:00,,,,,,,,2012-04-29 08:00,2012-04-29 16:00,,,,,PT_Normal,,,,,yYX3PPb/W0So4itQLAllQw,DJqmnZU+Ek6DC34w8gVqrg,,,N,0,0,,,2012-05-05 12:17,2012-05-16 14:02,admin,admin
118,129568,3769,19926,1191,1,100,N,N,N,CP_Drtn,TT_Task,DT_FixedDUR2,RV_OK,TK_Complete,SD-H-1-20,R.c footings,,,,0,0,0,0,8,0,0,0,,2012-04-04 00:00,2012-04-04 00:00,,,,,,,,2012-04-30 08:00,2012-04-30 16:00,,,,,PT_Normal,,,,,4k0L/xXDAkuqck10poJ+0g,BnOWJkzkmUyFgM2G4Hz5UQ,,,N,0,0,,,2012-05-05 12:17,2012-05-16 14:02,admin,admin
119,129569,3769,19926,1191,1,0,N,N,N,CP_Drtn,TT_Task,DT_FixedDUR2,RV_OK,TK_NotStart,SD-H-1-30,Ground floor columns,,296,0,8,0,0,0,8,0,0,0,,,,2012-06-28 08:00,2012-06-28 16:00,,2012-05-16 08:00,2012-05-16 16:00,2012-05-16 08:00,2012-05-16 16:00,2012-05-16 08:00,2012-05-16 16:00,,2012-06-28 08:00,2012-06-28 16:00,,PT_Normal,,,,,IKA1Uxiu2Eaw8r6E7HLrew,OLnKs9HZE0ewUj+o1GWNHg,,,N,0,0,,,2012-05-05 12:17,2012-05-16 14:02,admin,admin
120,129570,3769,19926,1191,1,100,N,N,N,CP_Drtn,TT_Task,DT_FixedDUR2,RV_OK,TK_Complete,SD-H-1-40,Ground floor slabs,,,,0,0,0,0,8,0,0,0,,2012-05-07 00:00,2012-05-07 00:00,,,,,,,,2012-05-05 08:00,2012-05-05 16:00,,,,,PT_Normal,,,,,HfxEBGRV8Ui1K8pLiRyAHw,0Qq93sXlnkaNiBfr/agarw,,,N,0,0,,,2012-05-05 12:17,2012-05-16 14:02,admin,admin
121,129571,3769,19926,1191,1,0,N,N,N,CP_Drtn,TT_Task,DT_FixedDUR2,RV_OK,TK_NotStart,SD-H-1-50,first floor columns,,488,0,8,0,0,0,8,0,0,0,,,,2012-07-26 08:00,2012-07-26 16:00,,2012-05-16 08:00,2012-05-16 16:00,2012-05-16 08:00,2012-05-16 16:00,2012-05-16 08:00,2012-05-16 16:00,,2012-07-26 08:00,2012-07-26 16:00,,PT_Normal,,,,,MMZXC84uokiFQEYV4apjpw,pqzkqsWJqkGtoblH/Sz1uQ,,,N,0,0,,,2012-05-05 12:17,2012-05-16 14:02,admin,admin
122,129572,3769,19926,1191,1,0,N,N,N,CP_Drtn,TT_Task,DT_FixedDUR2,RV_OK,TK_NotStart,SD-H-1-60,First floor slab,,568,0,8,0,0,0,8,0,0,0,,,,2012-08-07 08:00,2012-08-07 16:00,,2012-05-16 08:00,2012-05-16 16:00,2012-05-16 08:00,2012-05-16 16:00,2012-05-16 08:00,2012-05-16 16:00,,2012-08-07 08:00,2012-08-07 16:00,,PT_Normal,,,,,zYU/ZEhztEq+jH2L0BI4Zw,j+tqAi3yQUWirq+0jueTxw,,,N,0,0,,,2012-05-05 12:17,2012-05-16 14:02,admin,admin
123,129573,3769,19926,1191,1,0,N,N,N,CP_Drtn,TT_Task,DT_FixedDUR2,RV_OK,TK_NotStart,SD-H-1-70,Second floor columns,,680,0,8,0,0,0,8,0,0,0,,,,2012-08-23 08:00,2012-08-23 16:00,,2012-05-16 08:00,2012-05-16 16:00,2012-05-16 08:00,2012-05-16 16:00,2012-05-16 08:00,2012-05-16 16:00,,2012-08-23 08:00,2012-08-23 16:00,,PT_Normal,,,,,hZWzDyxNeEG9h+W9RItd0Q,IJHlevO7pUaiW03q2sDoYA,,,N,0,0,,,2012-05-05 12:17,2012-05-16 14:02,admin,admin
124,129574,3769,19926,1191,1,0,N,N,N,CP_Drtn,TT_Task,DT_FixedDUR2,RV_OK,TK_NotStart,SD-H-1-80,Second floor slab,,768,0,8,0,0,0,8,0,0,0,,,,2012-09-05 08:00,2012-09-05 16:00,,2012-05-16 08:00,2012-05-16 16:00,2012-05-16 08:00,2012-05-16 16:00,2012-05-16 08:00,2012-05-16 16:00,,2012-09-05 08:00,2012-09-05 16:00,,PT_Normal,,,,,IbsIdlIspEeX68xXt39EEA,MeDJdvrHMkCuKKQwyHJquQ,,,N,0,0,,,2012-05-05 12:17,2012-05-16 14:02,admin,admin
125,129575,3769,19927,1191,1,100,N,N,N,CP_Drtn,TT_Task,DT_FixedDUR2,RV_OK,TK_Complete,SD-H-12-10,P.C footings,,,,0,0,0,0,8,0,0,0,,2012-05-13 00:00,2012-05-13 00:00,,,,,,,,2012-05-07 08:00,2012-05-07 16:00,,,,,PT_Normal,,,,,X2XtZXowUkmk8sqRJurlYA,sMwN+vrzHE+SK6c/TCy9VA,,,N,0,0,,,2012-05-05 12:17,2012-05-16 14:02,admin,admin
126,129576,3769,19927,1191,1,0,N,N,N,CP_Drtn,TT_Task,DT_FixedDUR2,RV_OK,TK_NotStart,SD-H-12-20,R.c footings,,16,0,8,0,0,0,8,0,0,0,,,,2012-05-24 08:00,2012-05-24 16:00,,2012-05-22 08:00,2012-05-22 16:00,2012-05-22 08:00,2012-05-22 16:00,2012-05-22 08:00,2012-05-22 16:00,,2012-05-24 08:00,2012-05-24 16:00,,PT_Normal,,,,,0AKjFvghgESGaXQHRh5s5g,HX71wdB2GkKTy8jVM7tMSA,,,N,0,0,,,2012-05-05 12:17,2012-05-16 14:02,admin,admin
127,129577,3769,19927,1191,1,0,N,N,N,CP_Drtn,TT_Task,DT_FixedDUR2,RV_OK,TK_NotStart,SD-H-12-30,Ground floor columns,,304,0,8,0,0,0,8,0,0,0,,,,2012-07-11 08:00,2012-07-11 16:00,,2012-05-28 08:00,2012-05-28 16:00,2012-05-28 08:00,2012-05-28 16:00,2012-05-28 08:00,2012-05-28 16:00,,2012-07-11 08:00,2012-07-11 16:00,,PT_Normal,,,,,shh3TwSbwkm9ZuAhMDztgg,LGgiK4VRMECGyyz3EkX3zg,,,N,0,0,,,2012-05-05 12:17,2012-05-16 14:02,admin,admin
128,129578,3769,19927,1191,1,0,N,N,N,CP_Drtn,TT_Task,DT_FixedDUR2,RV_OK,TK_NotStart,SD-H-12-40,Ground floor slabs,,368,0,8,0,0,0,8,0,0,0,,,,2012-07-21 08:00,2012-07-21 16:00,,2012-05-28 08:00,2012-05-28 16:00,2012-05-28 08:00,2012-05-28 16:00,2012-05-28 08:00,2012-05-28 16:00,,2012-07-21 08:00,2012-07-21 16:00,,PT_Normal,,,,,Jt+F1tCcCEu8phkRtWywXQ,BnaBYr7ng0Ojt5k8z43X5w,,,N,0,0,,,2012-05-05 12:17,2012-05-16 14:02,admin,admin
129,129579,3769,19927,1191,1,0,N,N,N,CP_Drtn,TT_Task,DT_FixedDUR2,RV_OK,TK_NotStart,SD-H-12-50,first floor columns,,488,0,8,0,0,0,8,0,0,0,,,,2012-08-07 08:00,2012-08-07 16:00,,2012-05-28 08:00,2012-05-28 16:00,2012-05-28 08:00,2012-05-28 16:00,2012-05-28 08:00,2012-05-28 16:00,,2012-08-07 08:00,2012-08-07 16:00,,PT_Normal,,,,,rVL30qKbB0GoD/WhAs2UUQ,P9z8QNu+BE6eBr7/ge2hUg,,,N,0,0,,,2012-05-05 12:17,2012-05-16 14:02,admin,admin
130,129580,3769,19927,1191,1,0,N,N,N,CP_Drtn,TT_Task,DT_FixedDUR2,RV_OK,TK_NotStart,SD-H-12-60,First floor slab,,520,0,8,0,0,0,8,0,0,0,,,,2012-08-16 08:00,2012-08-16 16:00,,2012-06-02 08:00,2012-06-02 16:00,2012-06-02 08:00,2012-06-02 16:00,2012-06-02 08:00,2012-06-02 16:00,,2012-08-16 08:00,2012-08-16 16:00,,PT_Normal,,,,,66ExXaq8sEirPrulwPObwQ,MWy519Zjh0mPAhCyhVMWLg,,,N,0,0,,,2012-05-05 12:17,2012-05-16 14:02,admin,admin
131,129581,3769,19927,1191,1,0,N,N,N,CP_Drtn,TT_Task,DT_FixedDUR2,RV_OK,TK_NotStart,SD-H-12-70,Second floor columns,,568,0,8,0,0,0,8,0,0,0,,,,2012-08-30 08:00,2012-08-30 16:00,,2012-06-09 08:00,2012-06-09 16:00,2012-06-09 08:00,2012-06-09 16:00,2012-06-09 08:00,2012-06-09 16:00,,2012-08-30 08:00,2012-08-30 16:00,,PT_Normal,,,,,e7o2sXOBiU6Fw0Nqyksgfg,coS1utiJkUKtb9ICRH8vmw,,,N,0,0,,,2012-05-05 12:17,2012-05-16 14:02,admin,admin
132,129582,3769,19927,1191,1,0,N,N,N,CP_Drtn,TT_Task,DT_FixedDUR2,RV_OK,TK_NotStart,SD-H-12-80,Second floor slab,,648,0,8,0,0,0,8,0,0,0,,,,2012-09-11 08:00,2012-09-11 16:00,,2012-06-09 08:00,2012-06-09 16:00,2012-06-09 08:00,2012-06-09 16:00,2012-06-09 08:00,2012-06-09 16:00,,2012-09-11 08:00,2012-09-11 16:00,,PT_Normal,,,,,Q8YuT9FJCUqDh7PZT9C8cA,vDJDYyiToEGezfPXL9J+SA,,,N,0,0,,,2012-05-05 12:17,2012-05-16 14:02,admin,admin
133,129583,3769,19945,1191,1,0,N,N,N,CP_Drtn,TT_Task,DT_FixedDUR2,RV_OK,TK_NotStart,SD-H-7-10,P.C footings,,0,0,8,0,0,0,8,0,0,0,,,,2012-05-19 08:00,2012-05-19 16:00,,2012-05-19 08:00,2012-05-19 16:00,2012-05-19 08:00,2012-05-19 16:00,2012-05-19 08:00,2012-05-19 16:00,,2012-05-19 08:00,2012-05-19 16:00,,PT_Normal,,,,,S8SlvpE7L0e7Rgyxv2rYMw,662GXNnMVkW02+5XzTLO6A,,,Y,0,0,,,2012-05-05 12:17,2012-05-16 14:02,admin,admin
134,129584,3769,19945,1191,1,0,N,N,N,CP_Drtn,TT_Task,DT_FixedDUR2,RV_OK,TK_NotStart,SD-H-7-20,R.c footings,,16,0,8,0,0,0,8,0,0,0,,,,2012-05-24 08:00,2012-05-24 16:00,,2012-05-22 08:00,2012-05-22 16:00,2012-05-22 08:00,2012-05-22 16:00,2012-05-22 08:00,2012-05-22 16:00,,2012-05-24 08:00,2012-05-24 16:00,,PT_Normal,,,,,vg0ef0UVhUW1R+DC29cacA,KRAfRHc1JUm5ScwZ63KrBw,,,N,0,0,,,2012-05-05 12:17,2012-05-16 14:02,admin,admin
135,129585,3769,19945,1191,1,0,N,N,N,CP_Drtn,TT_Task,DT_FixedDUR2,RV_OK,TK_NotStart,SD-H-7-30,Ground floor columns,,112,0,8,0,0,0,8,0,0,0,,,,2012-06-13 08:00,2012-06-13 16:00,,2012-05-28 08:00,2012-05-28 16:00,2012-05-28 08:00,2012-05-28 16:00,2012-05-28 08:00,2012-05-28 16:00,,2012-06-13 08:00,2012-06-13 16:00,,PT_Normal,,,,,fenHzKw1JEyTeqt1ETXZNQ,0Mvkb9yDAEyRUlYyaRkZ3Q,,,N,0,0,,,2012-05-05 12:17,2012-05-16 14:02,admin,admin
136,129586,3769,19945,1191,1,0,N,N,N,CP_Drtn,TT_Task,DT_FixedDUR2,RV_OK,TK_NotStart,SD-H-7-40,Ground floor slabs,,176,0,8,0,0,0,8,0,0,0,,,,2012-06-23 08:00,2012-06-23 16:00,,2012-05-28 08:00,2012-05-28 16:00,2012-05-28 08:00,2012-05-28 16:00,2012-05-28 08:00,2012-05-28 16:00,,2012-06-23 08:00,2012-06-23 16:00,,PT_Normal,,,,,aM8g9mLL+U28zlSe9Y8xYg,d/wjg3Sq2kCrZH2ISYl5Zg,,,N,0,0,,,2012-05-05 12:17,2012-05-16 14:02,admin,admin
137,129587,3769,19945,1191,1,0,N,N,N,CP_Drtn,TT_Task,DT_FixedDUR2,RV_OK,TK_NotStart,SD-H-7-50,first floor columns,,328,0,8,0,0,0,8,0,0,0,,,,2012-07-15 08:00,2012-07-15 16:00,,2012-05-28 08:00,2012-05-28 16:00,2012-05-28 08:00,2012-05-28 16:00,2012-05-28 08:00,2012-05-28 16:00,,2012-07-15 08:00,2012-07-15 16:00,,PT_Normal,,,,,9nJVuAB9aUmLtb/E0mP4qA,9gzk8wpu+UmoCWKEtKNiUA,,,N,0,0,,,2012-05-05 12:17,2012-05-16 14:02,admin,admin
138,129588,3769,19945,1191,1,0,N,N,N,CP_Drtn,TT_Task,DT_FixedDUR2,RV_OK,TK_NotStart,SD-H-7-60,First floor slab,,400,0,8,0,0,0,8,0,0,0,,,,2012-07-25 08:00,2012-07-25 16:00,,2012-05-28 08:00,2012-05-28 16:00,2012-05-28 08:00,2012-05-28 16:00,2012-05-28 08:00,2012-05-28 16:00,,2012-07-25 08:00,2012-07-25 16:00,,PT_Normal,,,,,YVRG25Z7nEed+0xuVZ6Xbw,MnT32apXrkypkqWWOgvAPw,,,N,0,0,,,2012-05-05 12:17,2012-05-16 14:02,admin,admin
139,129589,3769,19946,1191,1,100,N,N,N,CP_Drtn,TT_Task,DT_FixedDUR2,RV_OK,TK_Complete,AP-H-1-1,P.C footings,,,,0,0,0,0,8,0,0,0,,2012-03-18 00:00,2012-03-18 00:00,,,,,,,,2012-05-05 08:00,2012-05-05 16:00,,,,,PT_Normal,,,,,O21MT1pftkak3MTeYpPBmw,sMwN+vrzHE+SK6c/TCy9VA,,,N,0,0,,,2012-05-05 12:17,2012-05-16 14:02,admin,admin
140,129590,3769,19946,1191,1,100,N,N,N,CP_Drtn,TT_Task,DT_FixedDUR2,RV_OK,TK_Complete,AP-H-1-2,R.c footings,,,,0,0,0,0,8,0,0,0,,2012-04-08 00:00,2012-04-08 00:00,,,,,,,,2012-05-06 08:00,2012-05-06 16:00,,,,,PT_Normal,,,,,vd8a6l2aCkm151FOo9Aeqw,HX71wdB2GkKTy8jVM7tMSA,,,N,0,0,,,2012-05-05 12:17,2012-05-16 14:02,admin,admin
141,129591,3769,19946,1191,1,0,N,N,N,CP_Drtn,TT_Task,DT_FixedDUR2,RV_OK,TK_NotStart,AP-H-1-3,Ground floor columns,,296,0,8,0,0,0,8,0,0,0,,,,2012-07-05 08:00,2012-07-05 16:00,,2012-05-23 08:00,2012-05-23 16:00,2012-05-23 08:00,2012-05-23 16:00,2012-05-23 08:00,2012-05-23 16:00,,2012-07-05 08:00,2012-07-05 16:00,,PT_Normal,,,,,xPv8bTQj4UaHZdE85t5qNg,LGgiK4VRMECGyyz3EkX3zg,,,N,0,0,,,2012-05-05 12:17,2012-05-16 14:02,admin,admin
142,129592,3769,19946,1191,1,100,N,N,N,CP_Drtn,TT_Task,DT_FixedDUR2,RV_OK,TK_Complete,AP-H-1-4,Ground floor slabs,,,,0,0,0,0,8,0,0,0,,2012-05-10 00:00,2012-05-10 00:00,,,,,,,,2012-05-11 08:00,2012-05-11 16:00,,,,,PT_Normal,,,,,IGruOePk8E23nH56RbecMw,BnaBYr7ng0Ojt5k8z43X5w,,,N,0,0,,,2012-05-05 12:17,2012-05-16 14:02,admin,admin
143,129593,3769,19946,1191,1,0,N,N,N,CP_Drtn,TT_Task,DT_FixedDUR2,RV_OK,TK_NotStart,AP-H-1-5,first floor columns,,488,184,8,0,0,0,8,0,0,0,,,,2012-08-02 08:00,2012-08-02 16:00,,2012-05-23 08:00,2012-05-23 16:00,2012-05-23 08:00,2012-05-23 16:00,2012-05-23 08:00,2012-05-23 16:00,,2012-08-02 08:00,2012-08-02 16:00,,PT_Normal,,,,,IVfFR0KHbkSobzJTsxdpsw,P9z8QNu+BE6eBr7/ge2hUg,,,N,0,0,,,2012-05-05 12:17,2012-05-16 14:02,admin,admin
144,129594,3769,19946,1191,1,0,N,N,N,CP_Drtn,TT_Task,DT_FixedDUR2,RV_OK,TK_NotStart,AP-H-1-6,First floor slab,,568,264,8,0,0,0,8,0,0,0,,,,2012-08-14 08:00,2012-08-14 16:00,,2012-05-23 08:00,2012-05-23 16:00,2012-05-23 08:00,2012-05-23 16:00,2012-05-23 08:00,2012-05-23 16:00,,2012-08-14 08:00,2012-08-14 16:00,,PT_Normal,,,,,gThh/3WD4ECfLHC1RH2ZWg,MWy519Zjh0mPAhCyhVMWLg,,,N,0,0,,,2012-05-05 12:17,2012-05-16 14:02,admin,admin
145,129595,3769,19946,1191,1,0,N,N,N,CP_Drtn,TT_Task,DT_FixedDUR2,RV_OK,TK_NotStart,AP-H-1-7,Second floor columns,,680,384,8,0,0,0,8,0,0,0,,,,2012-08-30 08:00,2012-08-30 16:00,,2012-05-23 08:00,2012-05-23 16:00,2012-05-23 08:00,2012-05-23 16:00,2012-05-23 08:00,2012-05-23 16:00,,2012-08-30 08:00,2012-08-30 16:00,,PT_Normal,,,,,3P0WvKqM1Uqq4v/XkaHzcQ,coS1utiJkUKtb9ICRH8vmw,,,N,0,0,,,2012-05-05 12:17,2012-05-16 14:02,admin,admin
146,129596,3769,19946,1191,1,0,N,N,N,CP_Drtn,TT_Task,DT_FixedDUR2,RV_OK,TK_NotStart,AP-H-1-8,Second floor slab,,768,464,8,0,0,0,8,0,0,0,,,,2012-09-12 08:00,2012-09-12 16:00,,2012-05-23 08:00,2012-05-23 16:00,2012-05-23 08:00,2012-05-23 16:00,2012-05-23 08:00,2012-05-23 16:00,,2012-09-12 08:00,2012-09-12 16:00,,PT_Normal,,,,,EA+PZstvwkS+ErL7Z+JLfQ,vDJDYyiToEGezfPXL9J+SA,,,N,0,0,,,2012-05-05 12:17,2012-05-16 14:02,admin,admin
147,129597,3769,19930,1191,1,0,N,N,N,CP_Drtn,TT_Task,DT_FixedDUR2,RV_OK,TK_NotStart,AP-H-7-1,P.C footings,,0,0,8,0,0,0,8,0,0,0,,,,2012-05-26 08:00,2012-05-26 16:00,,2012-05-26 08:00,2012-05-26 16:00,2012-05-26 08:00,2012-05-26 16:00,2012-05-26 08:00,2012-05-26 16:00,,2012-05-26 08:00,2012-05-26 16:00,,PT_Normal,,,,,Pe2yYOxmZU++ZFjf5joAAw,wT0OuUwwI0ig0hx5EZXXZg,,,Y,0,0,,,2012-05-05 12:17,2012-05-16 14:02,admin,admin
148,129598,3769,19930,1191,1,0,N,N,N,CP_Drtn,TT_Task,DT_FixedDUR2,RV_OK,TK_NotStart,AP-H-7-2,R.c footings,,16,16,8,0,0,0,8,0,0,0,,,,2012-05-31 08:00,2012-05-31 16:00,,2012-05-29 08:00,2012-05-29 16:00,2012-05-29 08:00,2012-05-29 16:00,2012-05-29 08:00,2012-05-29 16:00,,2012-05-31 08:00,2012-05-31 16:00,,PT_Normal,,,,,E5fKVKtJckSMLeTN4levuw,RPeLmC8pQUivlLqrljfe7A,,,N,0,0,,,2012-05-05 12:17,2012-05-16 14:02,admin,admin
149,129599,3769,19930,1191,1,0,N,N,N,CP_Drtn,TT_Task,DT_FixedDUR2,RV_OK,TK_NotStart,AP-H-7-3,Ground floor columns,,112,112,8,0,0,0,8,0,0,0,,,,2012-06-20 08:00,2012-06-20 16:00,,2012-06-04 08:00,2012-06-04 16:00,2012-06-04 08:00,2012-06-04 16:00,2012-06-04 08:00,2012-06-04 16:00,,2012-06-20 08:00,2012-06-20 16:00,,PT_Normal,,,,,tKMyB4MHP0aS3ATWuA/Qgw,NgNcPVV0RUqr1BuLmhHpTQ,,,N,0,0,,,2012-05-05 12:17,2012-05-16 14:02,admin,admin
150,129600,3769,19930,1191,1,0,N,N,N,CP_Drtn,TT_Task,DT_FixedDUR2,RV_OK,TK_NotStart,AP-H-7-4,Ground floor slabs,,176,176,8,0,0,0,8,0,0,0,,,,2012-06-30 08:00,2012-06-30 16:00,,2012-06-04 08:00,2012-06-04 16:00,2012-06-04 08:00,2012-06-04 16:00,2012-06-04 08:00,2012-06-04 16:00,,2012-06-30 08:00,2012-06-30 16:00,,PT_Normal,,,,,gZP497WWx0K+m+GhDDelJA,ATZr319rWkGyS7lEA/YOxg,,,N,0,0,,,2012-05-05 12:17,2012-05-16 14:02,admin,admin
151,129601,3769,19930,1191,1,0,N,N,N,CP_Drtn,TT_Task,DT_FixedDUR2,RV_OK,TK_NotStart,AP-H-7-5,first floor columns,,328,328,8,0,0,0,8,0,0,0,,,,2012-07-22 08:00,2012-07-22 16:00,,2012-06-04 08:00,2012-06-04 16:00,2012-06-04 08:00,2012-06-04 16:00,2012-06-04 08:00,2012-06-04 16:00,,2012-07-22 08:00,2012-07-22 16:00,,PT_Normal,,,,,o+wqBpSm9UqNW5OX/yfjjg,JAw7fRKv40muoJ/hkKTt0g,,,N,0,0,,,2012-05-05 12:17,2012-05-16 14:02,admin,admin
152,129602,3769,19930,1191,1,0,N,N,N,CP_Drtn,TT_Task,DT_FixedDUR2,RV_OK,TK_NotStart,AP-H-7-6,First floor slab,,400,400,8,0,0,0,8,0,0,0,,,,2012-08-01 08:00,2012-08-01 16:00,,2012-06-04 08:00,2012-06-04 16:00,2012-06-04 08:00,2012-06-04 16:00,2012-06-04 08:00,2012-06-04 16:00,,2012-08-01 08:00,2012-08-01 16:00,,PT_Normal,,,,,1hf/FWqfx06RF5GiSDYLRg,xnrMk8lYuUuVz+Wl8VBhDA,,,N,0,0,,,2012-05-05 12:17,2012-05-16 14:02,admin,admin
153,129603,3769,19931,1191,1,0,N,N,N,CP_Drtn,TT_Task,DT_FixedDUR2,RV_OK,TK_NotStart,AP-H-12-1,P.C footings,,1024,1024,8,0,0,0,8,0,0,0,,,,2012-10-15 08:00,2012-10-15 16:00,,2012-05-19 08:00,2012-05-19 16:00,2012-05-19 08:00,2012-05-19 16:00,2012-05-19 08:00,2012-05-19 16:00,,2012-10-15 08:00,2012-10-15 16:00,,PT_Normal,,,,,ta6Odprt/EqpH9c4aTuzqA,pGJyfbLihUenQknbznMqIw,,,N,0,0,,,2012-05-05 12:17,2012-05-16 14:02,admin,admin
154,129604,3769,19931,1191,1,0,N,N,N,CP_Drtn,TT_Task,DT_FixedDUR2,RV_OK,TK_NotStart,AP-H-12-2,R.c footings,,16,0,8,0,0,0,8,0,0,0,,,,2012-05-31 08:00,2012-05-31 16:00,,2012-05-29 08:00,2012-05-29 16:00,2012-05-29 08:00,2012-05-29 16:00,2012-05-29 08:00,2012-05-29 16:00,,2012-05-31 08:00,2012-05-31 16:00,,PT_Normal,,,,,Zkd3s4swlE6XK5PeeOJEGw,YKYjHS1LD0SQ0wv4IXHvpQ,,,N,0,0,,,2012-05-05 12:17,2012-05-16 14:02,admin,admin
155,129605,3769,19931,1191,1,0,N,N,N,CP_Drtn,TT_Task,DT_FixedDUR2,RV_OK,TK_NotStart,AP-H-12-3,Ground floor columns,,304,280,8,0,0,0,8,0,0,0,,,,2012-07-18 08:00,2012-07-18 16:00,,2012-06-04 08:00,2012-06-04 16:00,2012-06-04 08:00,2012-06-04 16:00,2012-06-04 08:00,2012-06-04 16:00,,2012-07-18 08:00,2012-07-18 16:00,,PT_Normal,,,,,HJeHjL2z3E2PecUxkJwKCQ,cYtKcAVx0ECxnsNo0t43XQ,,,N,0,0,,,2012-05-05 12:17,2012-05-16 14:02,admin,admin
156,129606,3769,19931,1191,1,0,N,N,N,CP_Drtn,TT_Task,DT_FixedDUR2,RV_OK,TK_NotStart,AP-H-12-4,Ground floor slabs,,368,352,8,0,0,0,8,0,0,0,,,,2012-07-28 08:00,2012-07-28 16:00,,2012-06-04 08:00,2012-06-04 16:00,2012-06-04 08:00,2012-06-04 16:00,2012-06-04 08:00,2012-06-04 16:00,,2012-07-28 08:00,2012-07-28 16:00,,PT_Normal,,,,,bb7u5PG0j0C8ACOjBsgLZQ,OCcPMuEQEkiYzbsM+uxlow,,,N,0,0,,,2012-05-05 12:17,2012-05-16 14:02,admin,admin
157,129607,3769,19931,1191,1,0,N,N,N,CP_Drtn,TT_Task,DT_FixedDUR2,RV_OK,TK_NotStart,AP-H-12-5,first floor columns,,488,464,8,0,0,0,8,0,0,0,,,,2012-08-14 08:00,2012-08-14 16:00,,2012-06-04 08:00,2012-06-04 16:00,2012-06-04 08:00,2012-06-04 16:00,2012-06-04 08:00,2012-06-04 16:00,,2012-08-14 08:00,2012-08-14 16:00,,PT_Normal,,,,,USoWibD7UUmFUMddh05wNg,ukcPXKzndEWYIx4d486f7A,,,N,0,0,,,2012-05-05 12:17,2012-05-16 14:02,admin,admin
158,129608,3769,19931,1191,1,0,N,N,N,CP_Drtn,TT_Task,DT_FixedDUR2,RV_OK,TK_NotStart,AP-H-12-6,First floor slab,,520,504,8,0,0,0,8,0,0,0,,,,2012-08-23 08:00,2012-08-23 16:00,,2012-06-09 08:00,2012-06-09 16:00,2012-06-09 08:00,2012-06-09 16:00,2012-06-09 08:00,2012-06-09 16:00,,2012-08-23 08:00,2012-08-23 16:00,,PT_Normal,,,,,Sf3A/nJBP0GQnyrB1xtRNA,hP7WKzJ05E2glq9H/3uSrA,,,N,0,0,,,2012-05-05 12:17,2012-05-16 14:02,admin,admin
159,129609,3769,19931,1191,1,0,N,N,N,CP_Drtn,TT_Task,DT_FixedDUR2,RV_OK,TK_NotStart,AP-H-12-7,Second floor columns,,568,552,8,0,0,0,8,0,0,0,,,,2012-09-06 08:00,2012-09-06 16:00,,2012-06-16 08:00,2012-06-16 16:00,2012-06-16 08:00,2012-06-16 16:00,2012-06-16 08:00,2012-06-16 16:00,,2012-09-06 08:00,2012-09-06 16:00,,PT_Normal,,,,,B45uHJxGl0avOeuw61zm7A,6O4lrrYcgEy3B8B9EkDZSA,,,N,0,0,,,2012-05-05 12:17,2012-05-16 14:02,admin,admin
160,129610,3769,19931,1191,1,0,N,N,N,CP_Drtn,TT_Task,DT_FixedDUR2,RV_OK,TK_NotStart,AP-H-12-8,Second floor slab,,648,624,8,0,0,0,8,0,0,0,,,,2012-09-18 08:00,2012-09-18 16:00,,2012-06-16 08:00,2012-06-16 16:00,2012-06-16 08:00,2012-06-16 16:00,2012-06-16 08:00,2012-06-16 16:00,,2012-09-18 08:00,2012-09-18 16:00,,PT_Normal,,,,,NfWKfsUXski/3F/FmEo5pA,m7rJGZ2V60eT0URfD5tb/g,,,N,0,0,,,2012-05-05 12:17,2012-05-16 14:02,admin,admin
161,129611,3769,19918,1191,1,100,N,N,N,CP_Drtn,TT_Task,DT_FixedDUR2,RV_OK,TK_Complete,AP-C-5,Building 5,,,,0,0,0,0,8,0,0,0,,2012-03-29 00:00,2012-03-29 00:00,,,,,,,,2012-03-28 08:00,2012-03-28 16:00,,,,,PT_Normal,,,,,BldMZmt39EeRuRRV+Z6gYQ,,,,N,0,0,,,2012-05-05 12:17,2012-05-16 14:02,admin,admin
162,129612,3769,19897,1191,1,100,N,N,N,CP_Drtn,TT_Task,DT_FixedDUR2,RV_OK,TK_Complete,SD-C-50,Building 5,,,,0,0,0,0,8,0,0,0,,2012-03-27 00:00,2012-03-27 00:00,,,,,,,,2012-03-21 08:00,2012-03-21 16:00,,,,,PT_Normal,,,,,3+XH62Jl/Ue4dyGMFbWQNQ,oKPFbvRrdEWmAV9YfDxA4A,,,N,0,0,,,2012-05-05 12:17,2012-05-16 14:02,admin,admin
163,129613,3769,19904,1191,0,100,N,N,N,CP_Drtn,TT_Mile,DT_FixedDrtn,RV_OK,TK_Complete,DD-C-1,Building 1,,,,0,0,0,0,0,0,0,0,,2012-03-18 00:00,2012-03-18 00:00,,,,,,,,2012-03-18 08:00,2012-03-18 08:00,,,,,PT_Normal,,,,,mZDuomgAf0CMhh7u8A1Kpw,v9mpn5QHLU6sKxz4EkWfUg,,,N,0,0,,,2012-05-05 12:17,2012-05-16 14:02,admin,admin
164,129614,3769,19904,1191,0,100,N,N,N,CP_Drtn,TT_Mile,DT_FixedDrtn,RV_OK,TK_Complete,DD-C-2,Building 2,,,,0,0,0,0,0,0,0,0,,2012-03-18 00:00,2012-03-18 00:00,,,,,,,,2012-03-18 08:00,2012-03-18 08:00,,,,,PT_Normal,,,,,nwZ56d1t6kiGV9HW3eIi4w,F2WZUdxJzUy5nxgPghx4dA,,,N,0,0,,,2012-05-05 12:17,2012-05-16 14:02,admin,admin
165,129615,3769,19904,1191,0,100,N,N,N,CP_Drtn,TT_Mile,DT_FixedDrtn,RV_OK,TK_Complete,DD-C-3,Building 3,,,,0,0,0,0,0,0,0,0,,2012-03-18 00:00,2012-03-18 00:00,,,,,,,,2012-03-18 08:00,2012-03-18 08:00,,,,,PT_Normal,,,,,lQMkqtrPeEyPHmYM9ygohA,Lg0245JqPU6y8thOeN4ZBQ,,,N,0,0,,,2012-05-05 12:17,2012-05-16 14:02,admin,admin
166,129616,3769,19904,1191,0,100,N,N,N,CP_Drtn,TT_Mile,DT_FixedDrtn,RV_OK,TK_Complete,DD-C-4,Building 4,,,,0,0,0,0,0,0,0,0,,2012-03-18 00:00,2012-03-18 00:00,,,,,,,,2012-03-18 08:00,2012-03-18 08:00,,,,,PT_Normal,,,,,GdtQXUUeoEemWoqmrYULuA,k+zAH7v0jUKjAwQJJRBKzg,,,N,0,0,,,2012-05-05 12:17,2012-05-16 14:02,admin,admin
167,129617,3769,19904,1191,0,100,N,N,N,CP_Drtn,TT_Mile,DT_FixedDrtn,RV_OK,TK_Complete,DD-C-5,Building 5,,,,0,0,0,0,0,0,0,0,,2012-03-18 00:00,2012-03-18 00:00,,,,,,,,2012-03-18 08:00,2012-03-18 08:00,,,,,PT_Normal,,,,,RmDRYhsaw0+YDe6Eo/mdjA,aY/tD9ywCU+uL6hxSk9VJQ,,,N,0,0,,,2012-05-05 12:17,2012-05-16 14:02,admin,admin
168,129618,3769,19888,1191,0,100,N,N,N,CP_Drtn,TT_Mile,DT_FixedDrtn,RV_OK,TK_Complete,Z-C1,Zone 1,,,,0,0,0,0,0,0,0,0,,2012-03-18 00:00,2012-03-18 00:00,,,,,,,,2012-04-29 08:00,2012-04-29 08:00,,,,,PT_Normal,,,,,S8Z+WZZ4sUGKlAt4FyUcVg,,,,N,0,0,,,2012-05-05 12:17,2012-05-16 14:02,admin,admin
169,129619,3769,19888,1191,0,100,N,N,N,CP_Drtn,TT_Mile,DT_FixedDrtn,RV_OK,TK_Complete,Z-C2,Zone 2,,,,0,0,0,0,0,0,0,0,,2012-03-18 00:00,2012-03-18 00:00,,,,,,,,2012-04-29 08:00,2012-04-29 08:00,,,,,PT_Normal,,,,,jKLo9ivvqUOuJpll1RWP/g,kjFLa0JK0ky1/kdHaNf4SA,,,N,0,0,,,2012-05-05 12:17,2012-05-16 14:02,admin,admin
170,129620,3769,19888,1191,0,100,N,N,N,CP_Drtn,TT_Mile,DT_FixedDrtn,RV_OK,TK_Complete,Z-C3,Zone 3,,,,0,0,0,0,0,0,0,0,,2012-03-18 00:00,2012-03-18 00:00,,,,,,,,2012-04-29 08:00,2012-04-29 08:00,,,,,PT_Normal,,,,,7nnfkkhFpEePPeh8XEHlYw,kjFLa0JK0ky1/kdHaNf4SA,,,N,0,0,,,2012-05-05 12:17,2012-05-16 14:02,admin,admin
171,129621,3769,19888,1191,0,100,N,N,N,CP_Drtn,TT_Mile,DT_FixedDrtn,RV_OK,TK_Complete,Z-C4,Zone 4,,,,0,0,0,0,0,0,0,0,,2012-03-18 00:00,2012-03-18 00:00,,,,,,,,2012-04-29 08:00,2012-04-29 08:00,,,,,PT_Normal,,,,,oWEBfo9xtk2uk52YBaRv9w,kjFLa0JK0ky1/kdHaNf4SA,,,N,0,0,,,2012-05-05 12:17,2012-05-16 14:02,admin,admin
172,129622,3769,19888,1191,0,100,N,N,N,CP_Drtn,TT_Mile,DT_FixedDrtn,RV_OK,TK_Complete,Z-C5,Zone 5,,,,0,0,0,0,0,0,0,0,,2012-03-18 00:00,2012-03-18 00:00,,,,,,,,2012-04-29 08:00,2012-04-29 08:00,,,,,PT_Normal,,,,,1MHeIyaWHEadiCFsXtMQgw,kjFLa0JK0ky1/kdHaNf4SA,,,N,0,0,,,2012-05-05 12:17,2012-05-16 14:02,admin,admin
173,129623,3769,19893,1191,0,100,N,N,N,CP_Drtn,TT_Mile,DT_FixedDrtn,RV_OK,TK_Complete,Z-H12,Zone 12,,,,0,0,0,0,0,0,0,0,,2012-05-07 00:00,2012-05-07 00:00,,,,,,,,2012-05-05 08:00,2012-05-05 08:00,,,,,PT_Normal,,,,,hdyt4LQHRUqezUiFQxtjhw,kjFLa0JK0ky1/kdHaNf4SA,,,N,0,0,,,2012-05-05 12:17,2012-05-16 14:02,admin,admin
174,129624,3769,19893,1191,0,100,N,N,N,CP_Drtn,TT_Mile,DT_FixedDrtn,RV_OK,TK_Complete,Z-H11,Zone 11,,,,0,0,0,0,0,0,0,0,,2012-03-18 00:00,2012-03-18 00:00,,,,,,,,2012-04-29 08:00,2012-04-29 08:00,,,,,PT_Normal,,,,,zlfqwcuJpEWF5zNrnuugGw,kjFLa0JK0ky1/kdHaNf4SA,,,N,0,0,,,2012-05-05 12:17,2012-05-16 14:02,admin,admin
175,129625,3769,19893,1191,0,100,N,N,N,CP_Drtn,TT_Mile,DT_FixedDrtn,RV_OK,TK_Complete,Z-H10,Zone 10,,,,0,0,0,0,0,0,0,0,,2012-03-18 00:00,2012-03-18 00:00,,,,,,,,2012-04-29 08:00,2012-04-29 08:00,,,,,PT_Normal,,,,,j9s1JjKq3EKoKuCguhUpag,kjFLa0JK0ky1/kdHaNf4SA,,,N,0,0,,,2012-05-05 12:17,2012-05-16 14:02,admin,admin
176,129626,3769,19893,1191,0,100,N,N,N,CP_Drtn,TT_Mile,DT_FixedDrtn,RV_OK,TK_Complete,Z-H9,Zone 9,,,,0,0,0,0,0,0,0,0,,2012-03-18 00:00,2012-03-18 00:00,,,,,,,,2012-04-29 08:00,2012-04-29 08:00,,,,,PT_Normal,,,,,fj8nCa50Hke++uEZdOwLRA,kjFLa0JK0ky1/kdHaNf4SA,,,N,0,0,,,2012-05-05 12:17,2012-05-16 14:02,admin,admin
177,129627,3769,19893,1191,0,100,N,N,N,CP_Drtn,TT_Mile,DT_FixedDrtn,RV_OK,TK_Complete,Z-H8,Zone 8,,,,0,0,0,0,0,0,0,0,,2012-03-18 00:00,2012-03-18 00:00,,,,,,,,2012-04-29 08:00,2012-04-29 08:00,,,,,PT_Normal,,,,,9oKyWhXXNkWn9fdERtm6oA,kjFLa0JK0ky1/kdHaNf4SA,,,N,0,0,,,2012-05-05 12:17,2012-05-16 14:02,admin,admin
178,129628,3769,19893,1191,0,100,N,N,N,CP_Drtn,TT_Mile,DT_FixedDrtn,RV_OK,TK_Complete,Z-H1,Zone 1,,,,0,0,0,0,0,0,0,0,,2012-03-18 00:00,2012-03-18 00:00,,,,,,,,2012-04-29 08:00,2012-04-29 08:00,,,,,PT_Normal,,,,,Vt0FlGrKJEOyX9MnBtZ0AQ,kjFLa0JK0ky1/kdHaNf4SA,,,N,0,0,,,2012-05-05 12:17,2012-05-16 14:02,admin,admin
179,129629,3769,19893,1191,0,100,N,N,N,CP_Drtn,TT_Mile,DT_FixedDrtn,RV_OK,TK_Complete,Z-H2,Zone 2,,,,0,0,0,0,0,0,0,0,,2012-03-18 00:00,2012-03-18 00:00,,,,,,,,2012-04-29 08:00,2012-04-29 08:00,,,,,PT_Normal,,,,,I6luYzDLA0ie/vw2sH1lcw,SoijH/B08UaA42N/RY6k2w,,,N,0,0,,,2012-05-05 12:17,2012-05-16 14:02,admin,admin
180,129630,3769,19893,1191,0,100,N,N,N,CP_Drtn,TT_Mile,DT_FixedDrtn,RV_OK,TK_Complete,Z-H3,Zone 3,,,,0,0,0,0,0,0,0,0,,2012-03-18 00:00,2012-03-18 00:00,,,,,,,,2012-04-29 08:00,2012-04-29 08:00,,,,,PT_Normal,,,,,0tI1Fp+lCEiZxWmO/VBEdg,6aLGNHSjrEKGPjfEJmhYZA,,,N,0,0,,,2012-05-05 12:17,2012-05-16 14:02,admin,admin
181,129631,3769,19893,1191,0,100,N,N,N,CP_Drtn,TT_Mile,DT_FixedDrtn,RV_OK,TK_Complete,Z-H4,Zone 4,,,,0,0,0,0,0,0,0,0,,2012-03-18 00:00,2012-03-18 00:00,,,,,,,,2012-04-29 08:00,2012-04-29 08:00,,,,,PT_Normal,,,,,WrUIeBkyzUa+UlFpZ/DE3g,byn4C/sJtU+p+1ntLKBWFw,,,N,0,0,,,2012-05-05 12:17,2012-05-16 14:02,admin,admin
182,129632,3769,19893,1191,0,100,N,N,N,CP_Drtn,TT_Mile,DT_FixedDrtn,RV_OK,TK_Complete,Z-H5,Zone 5,,,,0,0,0,0,0,0,0,0,,2012-03-18 00:00,2012-03-18 00:00,,,,,,,,2012-04-29 08:00,2012-04-29 08:00,,,,,PT_Normal,,,,,54Yftp96M0S+FmHH21G5oA,Chzbt8iuXkWedjmL3BAdHw,,,N,0,0,,,2012-05-05 12:17,2012-05-16 14:02,admin,admin
183,129633,3769,19893,1191,0,100,N,N,N,CP_Drtn,TT_Mile,DT_FixedDrtn,RV_OK,TK_Complete,Z-H6,Zone 6,,,,0,0,0,0,0,0,0,0,,2012-03-18 00:00,2012-03-18 00:00,,,,,,,,2012-04-29 08:00,2012-04-29 08:00,,,,,PT_Normal,,,,,DNz37r6Zq0qlDq8VKa+pJg,jrc5Ac2OJE+YmGSOmjkHBg,,,N,0,0,,,2012-05-05 12:17,2012-05-16 14:02,admin,admin
184,129634,3769,19893,1191,0,0,N,N,N,CP_Drtn,TT_Mile,DT_FixedDrtn,RV_OK,TK_NotStart,Z-H7,Zone 7,,80,80,0,0,0,0,0,0,0,0,,,,2012-05-28 08:00,2012-05-28 08:00,,2012-05-16 08:00,2012-05-16 08:00,2012-05-16 08:00,2012-05-16 08:00,2012-05-16 08:00,2012-05-16 08:00,,2012-05-28 08:00,2012-05-28 08:00,,PT_Normal,,,,,67AaHqCiWk+jiclyLzXjsQ,jrc5Ac2OJE+YmGSOmjkHBg,,,N,0,0,,,2012-05-05 12:17,2012-05-16 14:02,admin,admin
185,129635,3769,19995,3746,1,100,N,N,N,CP_Drtn,TT_Task,DT_FixedDUR2,RV_OK,TK_Complete,H-1-40,R.C footings form work,3777,,,0,86,0,86,24,0,0,0,,2012-04-14 00:00,2012-04-19 00:00,,,,,,,,2012-05-07 08:00,2012-05-09 16:00,,,,,PT_Normal,,,,,SdYRa21+akyzkfGIM1hksQ,BhOfBg4b1EWi0enjZNXSdQ,,,N,86,0,,,2012-05-05 12:17,2012-05-16 14:02,admin,admin
186,129636,3769,19996,3746,1,0,N,N,N,CP_Drtn,TT_Task,DT_FixedDUR2,RV_OK,TK_NotStart,H-1-240,Columns form works,3777,352,0,32,0,14,14,32,0,0,0,,,,2012-07-07 08:00,2012-07-10 16:00,,2012-05-24 08:00,2012-05-27 16:00,2012-05-24 08:00,2012-05-27 16:00,2012-05-24 08:00,2012-05-27 16:00,,2012-07-07 08:00,2012-07-10 16:00,,PT_Normal,,,,,4Hh8WGL9Gkq58LieTNTH8A,LNRsOkQtfkWT+MXwPdeB0Q,,,N,0,0,,,2012-05-05 12:17,2012-05-16 14:02,admin,admin
187,129637,3769,19996,3746,1,0,N,N,N,CP_Drtn,TT_Task,DT_FixedDUR2,RV_OK,TK_NotStart,H-1-300,Slab form works,3777,352,0,80,0,100,100,80,0,0,0,,,,2012-07-17 08:00,2012-07-26 16:00,,2012-06-03 08:00,2012-06-12 16:00,2012-06-03 08:00,2012-06-12 16:00,2012-06-03 08:00,2012-06-12 16:00,,2012-07-17 08:00,2012-07-26 16:00,,PT_Normal,,,,,6NCGR+DU0Ey6txk3eKePSg,Yny8fXQWBkGeVzHw06QPFg,,,N,0,0,,,2012-05-05 12:17,2012-05-16 14:02,admin,admin
188,129638,3769,19991,3746,1,0,N,N,N,CP_Drtn,TT_Task,DT_FixedDUR2,RV_OK,TK_NotStart,H-1-360,Columns form works,3777,352,0,48,0,13,13,48,0,0,0,,,,2012-08-03 08:00,2012-08-08 16:00,,2012-06-20 08:00,2012-06-25 16:00,2012-06-20 08:00,2012-06-25 16:00,2012-06-20 08:00,2012-06-25 16:00,,2012-08-03 08:00,2012-08-08 16:00,,PT_Normal,,,,,Bm69hXKnqUaKhPe3yiskVA,U7BsaR28GEar0KOeAemOcQ,,,N,0,0,,,2012-05-05 12:17,2012-05-16 14:02,admin,admin
189,129639,3769,19991,3746,1,0,N,N,N,CP_Drtn,TT_Task,DT_FixedDUR2,RV_OK,TK_NotStart,H-1-430,Slab form works,3777,352,0,80,0,100,100,80,0,0,0,,,,2012-08-15 08:00,2012-08-24 16:00,,2012-07-02 08:00,2012-07-11 16:00,2012-07-02 08:00,2012-07-11 16:00,2012-07-02 08:00,2012-07-11 16:00,,2012-08-15 08:00,2012-08-24 16:00,,PT_Normal,,,,,ou5aBoitykCBdRJcdxf+0Q,o9ULGaM4UUyYVxxLMmzmsQ,,,N,0,0,,,2012-05-05 12:17,2012-05-16 14:02,admin,admin
190,129640,3769,20018,3746,1,0,N,N,N,CP_Drtn,TT_Task,DT_FixedDUR2,RV_OK,TK_NotStart,H-1-520,Columns form works,3777,352,0,48,0,13,13,48,0,0,0,,,,2012-09-01 08:00,2012-09-06 16:00,,2012-07-19 08:00,2012-07-24 16:00,2012-07-19 08:00,2012-07-24 16:00,2012-07-19 08:00,2012-07-24 16:00,,2012-09-01 08:00,2012-09-06 16:00,,PT_Normal,,,,,3jehrcVn/EKHSyJYrrXbgQ,u4Uk3d6wAkSu0frryyEHCA,,,N,0,0,,,2012-05-05 12:17,2012-05-16 14:02,admin,admin
191,129641,3769,20018,3746,1,0,N,N,N,CP_Drtn,TT_Task,DT_FixedDUR2,RV_OK,TK_NotStart,H-1-590,Slab form works,3777,352,0,80,0,100,100,80,0,0,0,,,,2012-09-13 08:00,2012-09-22 16:00,,2012-07-31 08:00,2012-08-09 16:00,2012-07-31 08:00,2012-08-09 16:00,2012-07-31 08:00,2012-08-09 16:00,,2012-09-13 08:00,2012-09-22 16:00,,PT_Normal,,,,,n/vBnO4QF0CfwlEcxGA8WA,c6CdoZ/S/0iimUziXIplFg,,,N,0,0,,,2012-05-05 12:17,2012-05-16 14:02,admin,admin
192,129642,3769,19976,3746,1,0,N,N,N,CP_Drtn,TT_Task,DT_FixedDUR2,RV_OK,TK_NotStart,H-1-390,Footing insulation,3780,744,0,32,0,10,10,32,0,0,0,,,,2012-09-29 08:00,2012-10-02 16:00,,2012-06-28 08:00,2012-07-01 16:00,2012-06-28 08:00,2012-07-01 16:00,2012-06-28 08:00,2012-07-01 16:00,,2012-09-29 08:00,2012-10-02 16:00,,PT_Normal,,,,,l2LegEOBukS5hN032bgxeQ,qvT2jbgSzU2PloPaC/IzxQ,,,N,0,0,,,2012-05-05 12:17,2012-05-16 14:02,admin,admin
193,129643,3769,19976,3746,1,0,N,N,N,CP_Drtn,TT_Task,DT_FixedDUR2,RV_OK,TK_NotStart,H-1-650,Water proofing membrane,3780,352,0,40,0,30,30,40,0,0,0,,,,2012-09-30 08:00,2012-10-04 16:00,,2012-08-17 08:00,2012-08-21 16:00,2012-08-17 08:00,2012-08-21 16:00,2012-08-17 08:00,2012-08-21 16:00,,2012-09-30 08:00,2012-10-04 16:00,,PT_Normal,,,,,kvj9C7MjwUmSZQmzGkDURg,uLK8W/Y9RU6ae71wjRUvlg,,,N,0,0,,,2012-05-05 12:17,2012-05-16 14:02,admin,admin
194,129644,3769,19976,3746,1,0,N,N,N,CP_Drtn,TT_Task,DT_FixedDUR2,RV_OK,TK_NotStart,H-1-670,Heat insulation,3780,352,0,24,0,7,7,24,0,0,0,,,,2012-10-08 08:00,2012-10-10 16:00,,2012-08-25 08:00,2012-08-27 16:00,2012-08-25 08:00,2012-08-27 16:00,2012-08-25 08:00,2012-08-27 16:00,,2012-10-08 08:00,2012-10-10 16:00,,PT_Normal,,,,,arfLxgWqjkWaiy7+/X9ilQ,8JkJqVlQekSkt8EH1pun3w,,,N,0,0,,,2012-05-05 12:17,2012-05-16 14:02,admin,admin
195,129645,3769,19952,3746,1,100,N,N,N,CP_Drtn,TT_Task,DT_FixedDUR2,RV_OK,TK_Complete,H-1-10,P.C  footings formwork,3777,,,0,53,0,53,24,0,0,0,,2012-03-28 00:00,2012-04-02 00:00,,,,,,,,2012-05-06 08:00,2012-05-08 16:00,,,,,PT_Normal,,,,,yR6zqWeY2keetN7qFsCJ6Q,xvsZe/oSrUOQj9spflnltA,,,N,53,0,,,2012-05-05 12:17,2012-05-16 14:02,admin,admin
196,129646,3769,19952,3746,1,0,N,N,N,CP_Drtn,TT_Task,DT_FixedDUR2,RV_OK,TK_NotStart,H-1-460,Slab on grade work,3777,744,0,24,0,11,11,24,0,0,0,,,,2012-10-11 08:00,2012-10-13 16:00,,2012-07-10 08:00,2012-07-12 16:00,2012-07-10 08:00,2012-07-12 16:00,2012-07-10 08:00,2012-07-12 16:00,,2012-10-11 08:00,2012-10-13 16:00,,PT_Normal,,,,,0x/Lj0SZ90Oy+blHm0gQXg,SfsKCy9qf0qblG8JCrSmBw,,,N,0,0,,,2012-05-05 12:17,2012-05-16 14:02,admin,admin
197,129647,3769,19976,3746,1,0,N,N,N,CP_Drtn,TT_Task,DT_FixedDUR2,RV_OK,TK_NotStart,H-1-690,Slopped plain concrete,3779,352,0,16,0,7,7,16,0,0,0,,,,2012-10-12 08:00,2012-10-13 16:00,,2012-08-29 08:00,2012-08-30 16:00,2012-08-29 08:00,2012-08-30 16:00,2012-08-29 08:00,2012-08-30 16:00,,2012-10-12 08:00,2012-10-13 16:00,,PT_Normal,,,,,JBCFkWPXuk2mcB1O9L6tLQ,qrroO+FfCEieBS0DM9DmEA,,,N,0,0,,,2012-05-05 12:17,2012-05-16 14:02,admin,admin
198,129648,3769,19996,3746,1,0,N,N,N,CP_Drtn,TT_Task,DT_FixedDUR2,RV_OK,TK_NotStart,H-1-290,Columns Pouring works,3779,352,0,8,0,3,3,8,0,0,0,,,,2012-07-16 08:00,2012-07-16 16:00,,2012-06-02 08:00,2012-06-02 16:00,2012-06-02 08:00,2012-06-02 16:00,2012-06-02 08:00,2012-06-02 16:00,,2012-07-16 08:00,2012-07-16 16:00,,PT_Normal,,,,,eggfMvvVvEqyrkDGpmC+mg,,,,N,0,0,,,2012-05-05 12:17,2012-05-16 14:02,admin,admin
199,129649,3769,19996,3746,1,0,N,N,N,CP_Drtn,TT_Task,DT_FixedDUR2,RV_OK,TK_NotStart,H-1-260,Columns Steel works,3778,352,0,24,0,24,24,24,0,0,0,,,,2012-07-12 08:00,2012-07-14 16:00,,2012-05-29 08:00,2012-05-31 16:00,2012-05-29 08:00,2012-05-31 16:00,2012-05-29 08:00,2012-05-31 16:00,,2012-07-12 08:00,2012-07-14 16:00,,PT_Normal,,,,,/q+XRrrNzE6SXuxUqiOuyQ,,,,N,0,0,,,2012-05-05 12:17,2012-05-16 14:02,admin,admin
200,129650,3769,19991,3746,1,0,N,N,N,CP_Drtn,TT_Task,DT_FixedDUR2,RV_OK,TK_NotStart,H-1-420,Columns Pouring works,3779,352,0,8,0,3,3,8,0,0,0,,,,2012-08-14 08:00,2012-08-14 16:00,,2012-07-01 08:00,2012-07-01 16:00,2012-07-01 08:00,2012-07-01 16:00,2012-07-01 08:00,2012-07-01 16:00,,2012-08-14 08:00,2012-08-14 16:00,,PT_Normal,,,,,jd1idM2uqE2oHolfkwyOPA,d/ckyV+g4UKXOgwhJQnHTw,,,N,0,0,,,2012-05-05 12:17,2012-05-16 14:02,admin,admin
201,129651,3769,19991,3746,1,0,N,N,N,CP_Drtn,TT_Task,DT_FixedDUR2,RV_OK,TK_NotStart,H-1-380,Columns Steel works,3778,352,0,24,0,22,22,24,0,0,0,,,,2012-08-10 08:00,2012-08-12 16:00,,2012-06-27 08:00,2012-06-29 16:00,2012-06-27 08:00,2012-06-29 16:00,2012-06-27 08:00,2012-06-29 16:00,,2012-08-10 08:00,2012-08-12 16:00,,PT_Normal,,,,,VmmehlfDDUKS+TbghX3bpA,uPz+qTQKd02Fj4tAzvrhbA,,,N,0,0,,,2012-05-05 12:17,2012-05-16 14:02,admin,admin
202,129652,3769,20018,3746,1,0,N,N,N,CP_Drtn,TT_Task,DT_FixedDUR2,RV_OK,TK_NotStart,H-1-580,Columns Pouring works,3779,352,0,8,0,3,3,8,0,0,0,,,,2012-09-12 08:00,2012-09-12 16:00,,2012-07-30 08:00,2012-07-30 16:00,2012-07-30 08:00,2012-07-30 16:00,2012-07-30 08:00,2012-07-30 16:00,,2012-09-12 08:00,2012-09-12 16:00,,PT_Normal,,,,,zeJV1Y/93UKtkUprJqGoiQ,d/ckyV+g4UKXOgwhJQnHTw,,,N,0,0,,,2012-05-05 12:17,2012-05-16 14:02,admin,admin
203,129653,3769,20018,3746,1,0,N,N,N,CP_Drtn,TT_Task,DT_FixedDUR2,RV_OK,TK_NotStart,H-1-550,Columns Steel works,3778,352,0,24,0,22,22,24,0,0,0,,,,2012-09-08 08:00,2012-09-10 16:00,,2012-07-26 08:00,2012-07-28 16:00,2012-07-26 08:00,2012-07-28 16:00,2012-07-26 08:00,2012-07-28 16:00,,2012-09-08 08:00,2012-09-10 16:00,,PT_Normal,,,,,2X5B3YYtdkyADKB98yGgsA,uPz+qTQKd02Fj4tAzvrhbA,,,N,0,0,,,2012-05-05 12:17,2012-05-16 14:02,admin,admin
204,129654,3769,19996,3746,1,0,N,N,N,CP_Drtn,TT_Task,DT_FixedDUR2,RV_OK,TK_NotStart,H-1-320,Slab steel works,3778,352,0,32,0,96,96,32,0,0,0,,,,2012-07-28 08:00,2012-07-31 16:00,,2012-06-14 08:00,2012-06-17 16:00,2012-06-14 08:00,2012-06-17 16:00,2012-06-14 08:00,2012-06-17 16:00,,2012-07-28 08:00,2012-07-31 16:00,,PT_Normal,,,,,e/RV12EO6kmMm+8utllohg,,,,N,0,0,,,2012-05-05 12:17,2012-05-16 14:02,admin,admin
205,129655,3769,19996,3746,1,0,N,N,N,CP_Drtn,TT_Task,DT_FixedDUR2,RV_OK,TK_NotStart,H-1-350,Slab Pouring works,3779,352,0,8,0,10,10,8,0,0,0,,,,2012-08-02 08:00,2012-08-02 16:00,,2012-06-19 08:00,2012-06-19 16:00,2012-06-19 08:00,2012-06-19 16:00,2012-06-19 08:00,2012-06-19 16:00,,2012-08-02 08:00,2012-08-02 16:00,,PT_Normal,,,,,/y6pQNbbB0qBRre1Zhi+uw,,,,N,0,0,,,2012-05-05 12:17,2012-05-16 14:02,admin,admin
206,129656,3769,19991,3746,1,0,N,N,N,CP_Drtn,TT_Task,DT_FixedDUR2,RV_OK,TK_NotStart,H-1-470,Slab steel works,3778,352,0,32,0,96,96,32,0,0,0,,,,2012-08-26 08:00,2012-08-29 16:00,,2012-07-13 08:00,2012-07-16 16:00,2012-07-13 08:00,2012-07-16 16:00,2012-07-13 08:00,2012-07-16 16:00,,2012-08-26 08:00,2012-08-29 16:00,,PT_Normal,,,,,/m7Czq7yo0esF4fyNE3KmA,IrTGOfYwWU2jVKb8VeGwkw,,,N,0,0,,,2012-05-05 12:17,2012-05-16 14:02,admin,admin
207,129657,3769,19991,3746,1,0,N,N,N,CP_Drtn,TT_Task,DT_FixedDUR2,RV_OK,TK_NotStart,H-1-500,Slab Pouring works,3779,352,0,8,0,10,10,8,0,0,0,,,,2012-08-31 08:00,2012-08-31 16:00,,2012-07-18 08:00,2012-07-18 16:00,2012-07-18 08:00,2012-07-18 16:00,2012-07-18 08:00,2012-07-18 16:00,,2012-08-31 08:00,2012-08-31 16:00,,PT_Normal,,,,,cYYrSVJgH02JMIBSPd6vGA,skf+OFfbMUaZgqmDXZjpeg,,,N,0,0,,,2012-05-05 12:17,2012-05-16 14:02,admin,admin
208,129658,3769,20018,3746,1,0,N,N,N,CP_Drtn,TT_Task,DT_FixedDUR2,RV_OK,TK_NotStart,H-1-610,Slab steel works,3778,352,0,32,0,96,96,32,0,0,0,,,,2012-09-24 08:00,2012-09-27 16:00,,2012-08-11 08:00,2012-08-14 16:00,2012-08-11 08:00,2012-08-14 16:00,2012-08-11 08:00,2012-08-14 16:00,,2012-09-24 08:00,2012-09-27 16:00,,PT_Normal,,,,,sSv4uq46qker5kjjPyv/iQ,nVm+OMWdtU+cNV/6iEVSTQ,,,N,0,0,,,2012-05-05 12:17,2012-05-16 14:02,admin,admin
209,129659,3769,20018,3746,1,0,N,N,N,CP_Drtn,TT_Task,DT_FixedDUR2,RV_OK,TK_NotStart,H-1-640,Slab Pouring works,3779,352,0,8,0,10,10,8,0,0,0,,,,2012-09-29 08:00,2012-09-29 16:00,,2012-08-16 08:00,2012-08-16 16:00,2012-08-16 08:00,2012-08-16 16:00,2012-08-16 08:00,2012-08-16 16:00,,2012-09-29 08:00,2012-09-29 16:00,,PT_Normal,,,,,McSu5otuAUiFHA6lB6cjsw,lzLmH/i+a0yBQOSzcxFThA,,,N,0,0,,,2012-05-05 12:17,2012-05-16 14:02,admin,admin
210,129660,3769,19995,3746,1,100,N,N,N,CP_Drtn,TT_Task,DT_FixedDUR2,RV_OK,TK_Complete,H-1-90,R.C footings Pouring works,3779,,,0,11,0,11,8,0,0,0,,2012-04-24 00:00,2012-05-01 00:00,,,,,,,,2012-05-17 08:00,2012-05-17 16:00,,,,,PT_Normal,,,,,JDTu6LTJoEyLX795eHNPSw,,,,N,11,0,,,2012-05-05 12:17,2012-05-16 14:02,admin,admin
211,129661,3769,19995,3746,1,100,N,N,N,CP_Drtn,TT_Task,DT_FixedDUR2,RV_OK,TK_Complete,H-1-60,R.C footings steel works,3778,,,0,83,0,83,24,0,0,0,,2012-04-20 00:00,2012-04-23 00:00,,,,,,,,2012-05-11 08:00,2012-05-13 16:00,,,,,PT_Normal,,,,,yytpMKQQn0eI66Y57XryIg,,,,N,83,0,,,2012-05-05 12:17,2012-05-16 14:02,admin,admin
212,129662,3769,20001,3746,1,0,N,N,N,CP_Drtn,TT_Task,DT_FixedDUR2,RV_OK,TK_NotStart,H-2-40,R.C footings form work,3777,532,0,24,0,94,94,24,0,0,0,,,,2012-07-22 08:00,2012-07-24 16:00,,2012-05-16 12:00,2012-05-19 12:00,2012-05-16 12:00,2012-05-19 12:00,2012-05-16 12:00,2012-05-19 12:00,,2012-07-22 08:00,2012-07-24 16:00,,PT_Normal,,,,,n+tTxP1fYU6v8FJtzxNwEw,pI5YX2z4R0G8sUa4oXL2sQ,,,N,0,0,,,2012-05-05 12:17,2012-05-16 14:02,admin,admin
213,129663,3769,20002,3746,1,0,N,N,N,CP_Drtn,TT_Task,DT_FixedDUR2,RV_OK,TK_NotStart,H-2-100,Columns form works,3777,532,0,32,0,33,33,32,0,0,0,,,,2012-07-30 08:00,2012-08-02 16:00,,2012-05-24 12:00,2012-05-28 12:00,2012-05-24 12:00,2012-05-28 12:00,2012-05-24 12:00,2012-05-28 12:00,,2012-07-30 08:00,2012-08-02 16:00,,PT_Normal,,,,,qESurs56fE6jF0INHaidMg,ZNxJohhQ0kig/lH/L0DlNA,,,N,0,0,,,2012-05-05 12:17,2012-05-16 14:02,admin,admin
214,129664,3769,20002,3746,1,0,N,N,N,CP_Drtn,TT_Task,DT_FixedDUR2,RV_OK,TK_NotStart,H-2-160,Slab form works,3777,532,0,56,0,158,158,56,0,0,0,,,,2012-08-08 08:00,2012-08-14 16:00,,2012-06-02 12:00,2012-06-09 12:00,2012-06-02 12:00,2012-06-09 12:00,2012-06-02 12:00,2012-06-09 12:00,,2012-08-08 08:00,2012-08-14 16:00,,PT_Normal,,,,,Gqmn/uZgX0iheoKGKXcqtg,+gwC3XvkS0Sgo6GLcekxqA,,,N,0,0,,,2012-05-05 12:17,2012-05-16 14:02,admin,admin
215,129665,3769,19994,3746,1,0,N,N,N,CP_Drtn,TT_Task,DT_FixedDUR2,RV_OK,TK_NotStart,H-2-220,Columns form works,3777,532,0,32,0,20,20,32,0,0,0,,,,2012-08-21 08:00,2012-08-24 16:00,,2012-06-15 12:00,2012-06-19 12:00,2012-06-15 12:00,2012-06-19 12:00,2012-06-15 12:00,2012-06-19 12:00,,2012-08-21 08:00,2012-08-24 16:00,,PT_Normal,,,,,Wbf7pFhbZEi8fpp19WMaEQ,yM6AWXiM8EeF4M6wL9YRBg,,,N,0,0,,,2012-05-05 12:17,2012-05-16 14:02,admin,admin
216,129666,3769,19994,3746,1,0,N,N,N,CP_Drtn,TT_Task,DT_FixedDUR2,RV_OK,TK_NotStart,H-2-290,Slab form works,3777,532,0,56,0,158,158,56,0,0,0,,,,2012-08-30 08:00,2012-09-05 16:00,,2012-06-24 12:00,2012-07-01 12:00,2012-06-24 12:00,2012-07-01 12:00,2012-06-24 12:00,2012-07-01 12:00,,2012-08-30 08:00,2012-09-05 16:00,,PT_Normal,,,,,ajcYJFF04U+1kMCVDpP5bw,eUmZ5ZkllU65T/nqcI1pdQ,,,N,0,0,,,2012-05-05 12:17,2012-05-16 14:02,admin,admin
217,129667,3769,20007,3746,1,0,N,N,N,CP_Drtn,TT_Task,DT_FixedDUR2,RV_OK,TK_NotStart,H-2-370,Columns form works,3777,532,0,24,0,20,20,24,0,0,0,,,,2012-09-12 08:00,2012-09-14 16:00,,2012-07-07 12:00,2012-07-10 12:00,2012-07-07 12:00,2012-07-10 12:00,2012-07-07 12:00,2012-07-10 12:00,,2012-09-12 08:00,2012-09-14 16:00,,PT_Normal,,,,,xUMpHZfQiEGkBtfwH5Wu1Q,iWO+P2EnB0a/PHSeVSUlPA,,,N,0,0,,,2012-05-05 12:17,2012-05-16 14:02,admin,admin
218,129668,3769,20007,3746,1,0,N,N,N,CP_Drtn,TT_Task,DT_FixedDUR2,RV_OK,TK_NotStart,H-2-450,Slab form works,3777,532,0,48,0,158,158,48,0,0,0,,,,2012-09-20 08:00,2012-09-25 16:00,,2012-07-15 12:00,2012-07-21 12:00,2012-07-15 12:00,2012-07-21 12:00,2012-07-15 12:00,2012-07-21 12:00,,2012-09-20 08:00,2012-09-25 16:00,,PT_Normal,,,,,l5hOicYUjUaxWqG0nf1Jmg,Oz+YL2zHMk+k+YZGY/Un2w,,,N,0,0,,,2012-05-05 12:17,2012-05-16 14:02,admin,admin
219,129669,3769,19967,3746,1,0,N,N,N,CP_Drtn,TT_Task,DT_FixedDUR2,RV_OK,TK_NotStart,H-2-250,Footing insulation,3780,788,0,24,0,0,0,24,0,0,0,,,,2012-10-01 08:00,2012-10-03 16:00,,2012-06-24 12:00,2012-06-27 12:00,2012-06-24 12:00,2012-06-27 12:00,2012-06-24 12:00,2012-06-27 12:00,,2012-10-01 08:00,2012-10-03 16:00,,PT_Normal,,,,,szFpkIASME6Z1qiYiS9G7Q,mt0MUnseVkiE5PyRXG/wQg,,,N,0,0,,,2012-05-05 12:17,2012-05-16 14:02,admin,admin
220,129670,3769,19967,3746,1,0,N,N,N,CP_Drtn,TT_Task,DT_FixedDUR2,RV_OK,TK_NotStart,H-2-510,Water proofing membrane,3780,532,0,40,0,53,53,40,0,0,0,,,,2012-10-02 08:00,2012-10-06 16:00,,2012-07-27 12:00,2012-08-01 12:00,2012-07-27 12:00,2012-08-01 12:00,2012-07-27 12:00,2012-08-01 12:00,,2012-10-02 08:00,2012-10-06 16:00,,PT_Normal,,,,,M+td5hdgDUC80OHWD8rjmg,kbz1uXPQU0KVAg15ehHgQg,,,N,0,0,,,2012-05-05 12:17,2012-05-16 14:02,admin,admin
221,129671,3769,19967,3746,1,0,N,N,N,CP_Drtn,TT_Task,DT_FixedDUR2,RV_OK,TK_NotStart,H-2-530,Heat insulation,3780,480,0,24,0,12,12,24,0,0,0,,,,2012-10-08 08:00,2012-10-10 16:00,,2012-08-09 08:00,2012-08-11 16:00,2012-08-09 08:00,2012-08-11 16:00,2012-08-09 08:00,2012-08-11 16:00,,2012-10-08 08:00,2012-10-10 16:00,,PT_Normal,,,,,nOoQziIUU0S0zoDX3Zr04Q,C1iHtNVbN0+F7KSL2eeqgg,,,N,0,0,,,2012-05-05 12:17,2012-05-16 14:02,admin,admin
222,129672,3769,19923,3746,1,0,N,N,N,CP_Drtn,TT_Task,DT_FixedDUR2,RV_OK,TK_Active,H-2-10,P.C  footings formwork,3777,1212,1212,12,35,35,70,24,0,0,0,,2012-04-26 00:00,,2012-10-14 12:00,2012-10-15 16:00,,2012-05-16 08:00,2012-05-17 12:00,2012-05-16 08:00,2012-05-17 12:00,2012-06-14 12:00,2012-06-17 12:00,,2012-10-14 12:00,2012-10-15 16:00,,PT_Normal,,,,,yw5S6YKzYEGKZgPH19owng,QkJM3ZPVqEGwSmfvMqX1DQ,,,N,35,0,,,2012-05-05 12:17,2012-05-16 14:02,admin,admin
223,129673,3769,19923,3746,1,0,N,N,N,CP_Drtn,TT_Task,DT_FixedDUR2,RV_OK,TK_NotStart,H-2-350,Slab on grade work,3777,788,0,16,0,18,18,16,0,0,0,,,,2012-10-12 08:00,2012-10-13 16:00,,2012-07-05 12:00,2012-07-07 12:00,2012-07-05 12:00,2012-07-07 12:00,2012-07-05 12:00,2012-07-07 12:00,,2012-10-12 08:00,2012-10-13 16:00,,PT_Normal,,,,,ww7+3mWag0mc85UFK2TzRw,VZ2fPoqzH0aV/YokfJGCKA,,,N,0,0,,,2012-05-05 12:17,2012-05-16 14:02,admin,admin
224,129674,3769,19967,3746,1,0,N,N,N,CP_Drtn,TT_Task,DT_FixedDUR2,RV_OK,TK_NotStart,H-2-550,Slopped plain concrete,3779,480,0,16,0,12,12,16,0,0,0,,,,2012-10-12 08:00,2012-10-13 16:00,,2012-08-13 08:00,2012-08-14 16:00,2012-08-13 08:00,2012-08-14 16:00,2012-08-13 08:00,2012-08-14 16:00,,2012-10-12 08:00,2012-10-13 16:00,,PT_Normal,,,,,bnKG+Ng1T0OQhtauv+UdTQ,32HKISWPeEefuKpoZggc7g,,,N,0,0,,,2012-05-05 12:17,2012-05-16 14:02,admin,admin
225,129675,3769,20002,3746,1,0,N,N,N,CP_Drtn,TT_Task,DT_FixedDUR2,RV_OK,TK_NotStart,H-2-150,Columns Pouring works,3779,532,0,8,0,7,7,8,0,0,0,,,,2012-08-07 08:00,2012-08-07 16:00,,2012-06-01 12:00,2012-06-02 12:00,2012-06-01 12:00,2012-06-02 12:00,2012-06-01 12:00,2012-06-02 12:00,,2012-08-07 08:00,2012-08-07 16:00,,PT_Normal,,,,,wFfpdw6jXEqBMJM1CyjTiQ,d/ckyV+g4UKXOgwhJQnHTw,,,N,0,0,,,2012-05-05 12:17,2012-05-16 14:02,admin,admin
226,129676,3769,20002,3746,1,0,N,N,N,CP_Drtn,TT_Task,DT_FixedDUR2,RV_OK,TK_NotStart,H-2-120,Columns Steel works,3778,532,0,16,0,57,57,16,0,0,0,,,,2012-08-04 08:00,2012-08-05 16:00,,2012-05-29 12:00,2012-05-31 12:00,2012-05-29 12:00,2012-05-31 12:00,2012-05-29 12:00,2012-05-31 12:00,,2012-08-04 08:00,2012-08-05 16:00,,PT_Normal,,,,,Kbh8Ta0uLE6Lxw9DSNS/eQ,uPz+qTQKd02Fj4tAzvrhbA,,,N,0,0,,,2012-05-05 12:17,2012-05-16 14:02,admin,admin
227,129677,3769,19994,3746,1,0,N,N,N,CP_Drtn,TT_Task,DT_FixedDUR2,RV_OK,TK_NotStart,H-2-280,Columns Pouring works,3779,532,0,8,0,4,4,8,0,0,0,,,,2012-08-29 08:00,2012-08-29 16:00,,2012-06-23 12:00,2012-06-24 12:00,2012-06-23 12:00,2012-06-24 12:00,2012-06-23 12:00,2012-06-24 12:00,,2012-08-29 08:00,2012-08-29 16:00,,PT_Normal,,,,,UlHXQcGp/0aczAhvCGHZrw,Pc5hcNIehkCeZBcH2atIQw,,,N,0,0,,,2012-05-05 12:17,2012-05-16 14:02,admin,admin
228,129678,3769,19994,3746,1,0,N,N,N,CP_Drtn,TT_Task,DT_FixedDUR2,RV_OK,TK_NotStart,H-2-240,Columns Steel works,3778,532,0,16,0,36,36,16,0,0,0,,,,2012-08-26 08:00,2012-08-27 16:00,,2012-06-20 12:00,2012-06-22 12:00,2012-06-20 12:00,2012-06-22 12:00,2012-06-20 12:00,2012-06-22 12:00,,2012-08-26 08:00,2012-08-27 16:00,,PT_Normal,,,,,Ry6cLN0hYEmJKCiL7fypVw,NBZOAeSUoEqQsGX27leNvg,,,N,0,0,,,2012-05-05 12:17,2012-05-16 14:02,admin,admin
229,129679,3769,20007,3746,1,0,N,N,N,CP_Drtn,TT_Task,DT_FixedDUR2,RV_OK,TK_NotStart,H-2-440,Columns Pouring works,3779,532,0,8,0,4,4,8,0,0,0,,,,2012-09-19 08:00,2012-09-19 16:00,,2012-07-14 12:00,2012-07-15 12:00,2012-07-14 12:00,2012-07-15 12:00,2012-07-14 12:00,2012-07-15 12:00,,2012-09-19 08:00,2012-09-19 16:00,,PT_Normal,,,,,cwyflN0F8kGXUwLka1K0BQ,rDyH+TIPqkeCTadjVud1Bg,,,N,0,0,,,2012-05-05 12:17,2012-05-16 14:02,admin,admin
230,129680,3769,20007,3746,1,0,N,N,N,CP_Drtn,TT_Task,DT_FixedDUR2,RV_OK,TK_NotStart,H-2-410,Columns Steel works,3778,532,0,16,0,36,36,16,0,0,0,,,,2012-09-16 08:00,2012-09-17 16:00,,2012-07-11 12:00,2012-07-13 12:00,2012-07-11 12:00,2012-07-13 12:00,2012-07-11 12:00,2012-07-13 12:00,,2012-09-16 08:00,2012-09-17 16:00,,PT_Normal,,,,,Redcuw2kNkaX1d4NAa/YWA,0+bvzzEmR0WL5KNVKXS8tA,,,N,0,0,,,2012-05-05 12:17,2012-05-16 14:02,admin,admin
231,129681,3769,20002,3746,1,0,N,N,N,CP_Drtn,TT_Task,DT_FixedDUR2,RV_OK,TK_NotStart,H-2-180,Slab steel works,3778,532,0,24,0,152,152,24,0,0,0,,,,2012-08-16 08:00,2012-08-18 16:00,,2012-06-10 12:00,2012-06-13 12:00,2012-06-10 12:00,2012-06-13 12:00,2012-06-10 12:00,2012-06-13 12:00,,2012-08-16 08:00,2012-08-18 16:00,,PT_Normal,,,,,AkEVWDv+D02Yz3seAqVsYA,IrTGOfYwWU2jVKb8VeGwkw,,,N,0,0,,,2012-05-05 12:17,2012-05-16 14:02,admin,admin
232,129682,3769,20002,3746,1,0,N,N,N,CP_Drtn,TT_Task,DT_FixedDUR2,RV_OK,TK_NotStart,H-2-210,Slab Pouring works,3779,532,0,8,0,16,16,8,0,0,0,,,,2012-08-20 08:00,2012-08-20 16:00,,2012-06-14 12:00,2012-06-15 12:00,2012-06-14 12:00,2012-06-15 12:00,2012-06-14 12:00,2012-06-15 12:00,,2012-08-20 08:00,2012-08-20 16:00,,PT_Normal,,,,,eino31Ny/UKr93Wr+ciKPA,skf+OFfbMUaZgqmDXZjpeg,,,N,0,0,,,2012-05-05 12:17,2012-05-16 14:02,admin,admin
233,129683,3769,19994,3746,1,0,N,N,N,CP_Drtn,TT_Task,DT_FixedDUR2,RV_OK,TK_NotStart,H-2-320,Slab steel works,3778,532,0,24,0,152,152,24,0,0,0,,,,2012-09-07 08:00,2012-09-09 16:00,,2012-07-02 12:00,2012-07-05 12:00,2012-07-02 12:00,2012-07-05 12:00,2012-07-02 12:00,2012-07-05 12:00,,2012-09-07 08:00,2012-09-09 16:00,,PT_Normal,,,,,k8qrJVGMPk6mTIAJFVwSLw,nVm+OMWdtU+cNV/6iEVSTQ,,,N,0,0,,,2012-05-05 12:17,2012-05-16 14:02,admin,admin
234,129684,3769,19994,3746,1,0,N,N,N,CP_Drtn,TT_Task,DT_FixedDUR2,RV_OK,TK_NotStart,H-2-360,Slab Pouring works,3779,532,0,8,0,16,16,8,0,0,0,,,,2012-09-11 08:00,2012-09-11 16:00,,2012-07-06 12:00,2012-07-07 12:00,2012-07-06 12:00,2012-07-07 12:00,2012-07-06 12:00,2012-07-07 12:00,,2012-09-11 08:00,2012-09-11 16:00,,PT_Normal,,,,,drCQUWzbR0SZRDzHYm0Hqw,lzLmH/i+a0yBQOSzcxFThA,,,N,0,0,,,2012-05-05 12:17,2012-05-16 14:02,admin,admin
235,129685,3769,20007,3746,1,0,N,N,N,CP_Drtn,TT_Task,DT_FixedDUR2,RV_OK,TK_NotStart,H-2-470,Slab steel works,3778,532,0,24,0,152,152,24,0,0,0,,,,2012-09-27 08:00,2012-09-29 16:00,,2012-07-22 12:00,2012-07-25 12:00,2012-07-22 12:00,2012-07-25 12:00,2012-07-22 12:00,2012-07-25 12:00,,2012-09-27 08:00,2012-09-29 16:00,,PT_Normal,,,,,B6CY+jq06kyjEQY4uvqjSg,RclEthIV+keLPY0fAE7HhA,,,N,0,0,,,2012-05-05 12:17,2012-05-16 14:02,admin,admin
236,129686,3769,20007,3746,1,0,N,N,N,CP_Drtn,TT_Task,DT_FixedDUR2,RV_OK,TK_NotStart,H-2-500,Slab Pouring works,3779,532,0,8,0,16,16,8,0,0,0,,,,2012-10-01 08:00,2012-10-01 16:00,,2012-07-26 12:00,2012-07-27 12:00,2012-07-26 12:00,2012-07-27 12:00,2012-07-26 12:00,2012-07-27 12:00,,2012-10-01 08:00,2012-10-01 16:00,,PT_Normal,,,,,ibme+fjAEUeL2xm3oXPUzA,v3XOYaKxRU2RLXTxEkl+fg,,,N,0,0,,,2012-05-05 12:17,2012-05-16 14:02,admin,admin
237,129687,3769,20001,3746,1,0,N,N,N,CP_Drtn,TT_Task,DT_FixedDUR2,RV_OK,TK_NotStart,H-2-90,R.C footings Pouring works,3779,532,0,8,0,12,12,8,0,0,0,,,,2012-07-29 08:00,2012-07-29 16:00,,2012-05-23 12:00,2012-05-24 12:00,2012-05-23 12:00,2012-05-24 12:00,2012-05-23 12:00,2012-05-24 12:00,,2012-07-29 08:00,2012-07-29 16:00,,PT_Normal,,,,,uhakGocq80KrzgTJTFczUQ,XsT38gA9BUuLuLLIL1B1PA,,,N,0,0,,,2012-05-05 12:17,2012-05-16 14:02,admin,admin
238,129688,3769,20001,3746,1,0,N,N,N,CP_Drtn,TT_Task,DT_FixedDUR2,RV_OK,TK_NotStart,H-2-60,R.C footings steel works,3778,532,0,16,0,85,85,16,0,0,0,,,,2012-07-26 08:00,2012-07-27 16:00,,2012-05-20 12:00,2012-05-22 12:00,2012-05-20 12:00,2012-05-22 12:00,2012-05-20 12:00,2012-05-22 12:00,,2012-07-26 08:00,2012-07-27 16:00,,PT_Normal,,,,,QCJpUkIo10GOBwb0DBShhw,YM+zIR85jkSOUX2kJkq1Zg,,,N,0,0,,,2012-05-05 12:17,2012-05-16 14:02,admin,admin
239,129689,3769,20009,3746,1,100,N,N,N,CP_Drtn,TT_Task,DT_FixedDUR2,RV_OK,TK_Complete,H-3-40,R.C footings form work,3777,,,0,62,0,62,56,0,0,0,,2012-03-25 00:00,2012-03-30 00:00,,,,,,,,2012-04-28 08:00,2012-05-04 16:00,,,,,PT_Normal,,,,,8tFG3K5PpEewu40Ve6klpA,pI5YX2z4R0G8sUa4oXL2sQ,,,N,62,0,,,2012-05-05 12:17,2012-05-16 14:02,admin,admin
240,129690,3769,20010,3746,1,100,N,N,N,CP_Drtn,TT_Task,DT_FixedDUR2,RV_OK,TK_Complete,H-3-100,Columns form works,3777,,,0,23,0,23,32,0,0,0,,2012-04-07 00:00,2012-04-11 00:00,,,,,,,,2012-05-13 08:00,2012-05-16 16:00,,,,,PT_Normal,,,,,2Brjk5ikm02XVczhS/XAZw,ZNxJohhQ0kig/lH/L0DlNA,,,N,23,0,,,2012-05-05 12:17,2012-05-16 14:02,admin,admin
241,129691,3769,20010,3746,1,100,N,N,N,CP_Drtn,TT_Task,DT_FixedDUR2,RV_OK,TK_Complete,H-3-160,Slab form works,3777,,,0,105,0,105,120,0,0,0,,2012-04-17 00:00,2012-04-22 00:00,,,,,,,,2012-05-22 08:00,2012-06-05 16:00,,,,,PT_Normal,,,,,W0lNQCMOY0uDV2M4Jx6UlQ,+gwC3XvkS0Sgo6GLcekxqA,,,N,105,0,,,2012-05-05 12:17,2012-05-16 14:02,admin,admin
242,129692,3769,20038,3746,1,100,N,N,N,CP_Drtn,TT_Task,DT_FixedDUR2,RV_OK,TK_Complete,H-3-220,Columns form works,3777,,,0,20,0,20,32,0,0,0,,2012-04-26 00:00,2012-04-29 00:00,,,,,,,,2012-05-07 08:00,2012-05-10 16:00,,,,,PT_Normal,,,,,Y5N8z3hATkGsKnK3qMeNUQ,yM6AWXiM8EeF4M6wL9YRBg,,,N,20,0,,,2012-05-05 12:17,2012-05-16 14:02,admin,admin
243,129693,3769,20038,3746,1,100,N,N,N,CP_Drtn,TT_Task,DT_FixedDUR2,RV_OK,TK_Complete,H-3-290,Slab form works,3777,,,0,105,0,105,120,0,0,0,,2012-05-02 00:00,2012-05-07 00:00,,,,,,,,2012-05-12 08:00,2012-05-26 16:00,,,,,PT_Normal,,,,,+CCvU/Nun0eBHZO83Hhwmw,eUmZ5ZkllU65T/nqcI1pdQ,,,N,105,0,,,2012-05-05 12:17,2012-05-16 14:02,admin,admin
244,129694,3769,20015,3746,1,0,N,N,N,CP_Drtn,TT_Task,DT_FixedDUR2,RV_OK,TK_NotStart,H-3-380,Columns form works,3777,736,0,64,0,20,20,64,0,0,0,,,,2012-08-24 08:00,2012-08-31 16:00,,2012-05-24 08:00,2012-05-31 16:00,2012-05-24 08:00,2012-05-31 16:00,2012-05-24 08:00,2012-05-31 16:00,,2012-08-24 08:00,2012-08-31 16:00,,PT_Normal,,,,,576dWZJV006/24wTk2kSsg,iWO+P2EnB0a/PHSeVSUlPA,,,N,0,0,,,2012-05-05 12:17,2012-05-16 14:02,admin,admin
245,129695,3769,20015,3746,1,0,N,N,N,CP_Drtn,TT_Task,DT_FixedDUR2,RV_OK,TK_NotStart,H-3-450,Slab form works,3777,736,0,120,0,105,105,120,0,0,0,,,,2012-09-07 08:00,2012-09-21 16:00,,2012-06-07 08:00,2012-06-21 16:00,2012-06-07 08:00,2012-06-21 16:00,2012-06-07 08:00,2012-06-21 16:00,,2012-09-07 08:00,2012-09-21 16:00,,PT_Normal,,,,,K+Ua4ufjC0e/mOVslVAWTg,Oz+YL2zHMk+k+YZGY/Un2w,,,N,0,0,,,2012-05-05 12:17,2012-05-16 14:02,admin,admin
246,129696,3769,19988,3746,1,0,N,N,N,CP_Drtn,TT_Task,DT_FixedDUR2,RV_OK,TK_NotStart,H-3-250,Footing insulation,3780,1048,0,56,0,9,9,56,0,0,0,,,,2012-09-24 08:00,2012-09-30 16:00,,2012-05-16 08:00,2012-05-22 16:00,2012-05-16 08:00,2012-05-22 16:00,2012-05-16 08:00,2012-05-22 16:00,,2012-09-24 08:00,2012-09-30 16:00,,PT_Normal,,,,,wORSz2C+h0SJn2rnQQk86w,mt0MUnseVkiE5PyRXG/wQg,,,N,0,0,,,2012-05-05 12:17,2012-05-16 14:02,admin,admin
247,129697,3769,19988,3746,1,0,N,N,N,CP_Drtn,TT_Task,DT_FixedDUR2,RV_OK,TK_NotStart,H-3-510,Water proofing membrane,3780,736,0,56,0,35,35,56,0,0,0,,,,2012-09-29 08:00,2012-10-05 16:00,,2012-06-29 08:00,2012-07-05 16:00,2012-06-29 08:00,2012-07-05 16:00,2012-06-29 08:00,2012-07-05 16:00,,2012-09-29 08:00,2012-10-05 16:00,,PT_Normal,,,,,6W+Bhxjm0UqmdTLVNpbBIg,kbz1uXPQU0KVAg15ehHgQg,,,N,0,0,,,2012-05-05 12:17,2012-05-16 14:02,admin,admin
248,129698,3769,19988,3746,1,0,N,N,N,CP_Drtn,TT_Task,DT_FixedDUR2,RV_OK,TK_NotStart,H-3-530,Heat insulation,3780,472,0,24,0,8,8,24,0,0,0,,,,2012-10-07 08:00,2012-10-09 16:00,,2012-08-09 08:00,2012-08-11 16:00,2012-08-09 08:00,2012-08-11 16:00,2012-08-09 08:00,2012-08-11 16:00,,2012-10-07 08:00,2012-10-09 16:00,,PT_Normal,,,,,S07BGbIUsk+EmNWA5BlYzg,C1iHtNVbN0+F7KSL2eeqgg,,,N,0,0,,,2012-05-05 12:17,2012-05-16 14:02,admin,admin
249,129699,3769,19950,3746,1,100,N,N,N,CP_Drtn,TT_Task,DT_FixedDUR2,RV_OK,TK_Complete,H-3-10,P.C  footings formwork,3777,,,0,46,0,46,40,0,0,0,,2012-03-18 00:00,2012-03-18 00:00,,,,,,,,2012-03-29 08:00,2012-04-02 16:00,,,,,PT_Normal,,,,,6i/6ydxBu0yOF21+5vCLGw,QkJM3ZPVqEGwSmfvMqX1DQ,,,N,46,0,,,2012-05-05 12:17,2012-05-16 14:02,admin,admin
250,129700,3769,19950,3746,1,0,N,N,N,CP_Drtn,TT_Task,DT_FixedDUR2,RV_OK,TK_NotStart,H-3-320,Slab on grade work,3777,1048,0,40,0,12,12,40,0,0,0,,,,2012-10-09 08:00,2012-10-13 16:00,,2012-05-31 08:00,2012-06-04 16:00,2012-05-31 08:00,2012-06-04 16:00,2012-05-31 08:00,2012-06-04 16:00,,2012-10-09 08:00,2012-10-13 16:00,,PT_Normal,,,,,5Rfs3CLoj0mGlkj4CQxvHg,VZ2fPoqzH0aV/YokfJGCKA,,,N,0,0,,,2012-05-05 12:17,2012-05-16 14:02,admin,admin
251,129701,3769,19988,3746,1,0,N,N,N,CP_Drtn,TT_Task,DT_FixedDUR2,RV_OK,TK_NotStart,H-3-550,Slopped plain concrete,3779,472,0,24,0,8,8,24,0,0,0,,,,2012-10-11 08:00,2012-10-13 16:00,,2012-08-13 08:00,2012-08-15 16:00,2012-08-13 08:00,2012-08-15 16:00,2012-08-13 08:00,2012-08-15 16:00,,2012-10-11 08:00,2012-10-13 16:00,,PT_Normal,,,,,7jnXGaPCwUGPK6uewVli2Q,32HKISWPeEefuKpoZggc7g,,,N,0,0,,,2012-05-05 12:17,2012-05-16 14:02,admin,admin
252,129702,3769,20010,3746,1,100,N,N,N,CP_Drtn,TT_Task,DT_FixedDUR2,RV_OK,TK_Complete,H-3-150,Columns Pouring works,3779,,,0,5,0,5,8,0,0,0,,2012-04-16 00:00,2012-04-16 00:00,,,,,,,,2012-05-22 08:00,2012-05-22 16:00,,,,,PT_Normal,,,,,ldEYvgFvLE2O5yn07FT5dQ,d/ckyV+g4UKXOgwhJQnHTw,,,N,5,0,,,2012-05-05 12:17,2012-05-16 14:02,admin,admin
253,129703,3769,20010,3746,1,100,N,N,N,CP_Drtn,TT_Task,DT_FixedDUR2,RV_OK,TK_Complete,H-3-120,Columns Steel works,3778,,,0,40,0,40,24,0,0,0,,2012-04-12 00:00,2012-04-15 00:00,,,,,,,,2012-05-18 08:00,2012-05-20 16:00,,,,,PT_Normal,,,,,Iigk7Tq9PEq8YotRe3UFYg,uPz+qTQKd02Fj4tAzvrhbA,,,N,40,0,,,2012-05-05 12:17,2012-05-16 14:02,admin,admin
254,129704,3769,20038,3746,1,100,N,N,N,CP_Drtn,TT_Task,DT_FixedDUR2,RV_OK,TK_Complete,H-3-280,Columns Pouring works,3779,,,0,5,0,5,8,0,0,0,,2012-05-01 00:00,2012-05-03 00:00,,,,,,,,2012-05-16 08:00,2012-05-16 16:00,,,,,PT_Normal,,,,,08moT1GcW0mVJ45x7qmlEQ,Pc5hcNIehkCeZBcH2atIQw,,,N,5,0,,,2012-05-05 12:17,2012-05-16 14:02,admin,admin
255,129705,3769,20038,3746,1,100,N,N,N,CP_Drtn,TT_Task,DT_FixedDUR2,RV_OK,TK_Complete,H-3-240,Columns Steel works,3778,,,0,33,0,33,24,0,0,0,,2012-04-28 00:00,2012-05-01 00:00,,,,,,,,2012-05-12 08:00,2012-05-14 16:00,,,,,PT_Normal,,,,,Q73RVwLlJUOKYiYsdDrBIw,NBZOAeSUoEqQsGX27leNvg,,,N,33,0,,,2012-05-05 12:17,2012-05-16 14:02,admin,admin
256,129706,3769,20015,3746,1,0,N,N,N,CP_Drtn,TT_Task,DT_FixedDUR2,RV_OK,TK_NotStart,H-3-440,Columns Pouring works,3779,736,0,8,0,5,5,8,0,0,0,,,,2012-09-06 08:00,2012-09-06 16:00,,2012-06-06 08:00,2012-06-06 16:00,2012-06-06 08:00,2012-06-06 16:00,2012-06-06 08:00,2012-06-06 16:00,,2012-09-06 08:00,2012-09-06 16:00,,PT_Normal,,,,,WPp/OUxpj0204Xq1DFAFVQ,rDyH+TIPqkeCTadjVud1Bg,,,N,0,0,,,2012-05-05 12:17,2012-05-16 14:02,admin,admin
257,129707,3769,20015,3746,1,0,N,N,N,CP_Drtn,TT_Task,DT_FixedDUR2,RV_OK,TK_NotStart,H-3-410,Columns Steel works,3778,736,0,24,0,33,33,24,0,0,0,,,,2012-09-02 08:00,2012-09-04 16:00,,2012-06-02 08:00,2012-06-04 16:00,2012-06-02 08:00,2012-06-04 16:00,2012-06-02 08:00,2012-06-04 16:00,,2012-09-02 08:00,2012-09-04 16:00,,PT_Normal,,,,,KLBEHWqKj0SPvxJohhm+zg,0+bvzzEmR0WL5KNVKXS8tA,,,N,0,0,,,2012-05-05 12:17,2012-05-16 14:02,admin,admin
258,129708,3769,20010,3746,1,100,N,N,N,CP_Drtn,TT_Task,DT_FixedDUR2,RV_OK,TK_Complete,H-3-180,Slab steel works,3778,,,0,101,0,101,32,0,0,0,,2012-04-22 00:00,2012-04-25 00:00,,,,,,,,2012-06-07 08:00,2012-06-10 16:00,,,,,PT_Normal,,,,,30ue7I7cuECqUlVdG65qig,IrTGOfYwWU2jVKb8VeGwkw,,,N,101,0,,,2012-05-05 12:17,2012-05-16 14:02,admin,admin
259,129709,3769,20010,3746,1,100,N,N,N,CP_Drtn,TT_Task,DT_FixedDUR2,RV_OK,TK_Complete,H-3-210,Slab Pouring works,3779,,,0,11,0,11,8,0,0,0,,2012-04-25 00:00,2012-04-26 00:00,,,,,,,,2012-06-13 08:00,2012-06-13 16:00,,,,,PT_Normal,,,,,sHuNed8X+02dQed4jVVj4A,skf+OFfbMUaZgqmDXZjpeg,,,N,11,0,,,2012-05-05 12:17,2012-05-16 14:02,admin,admin
260,129710,3769,20038,3746,1,100,N,N,N,CP_Drtn,TT_Task,DT_FixedDUR2,RV_OK,TK_Active,H-3-330,Slab steel works,3778,1192,1192,32,0,101,101,32,0,0,0,,2012-05-07 00:00,,2012-10-12 08:00,2012-10-15 16:00,,2012-05-16 08:00,2012-05-19 16:00,2012-05-16 08:00,2012-05-19 16:00,2012-05-28 08:00,2012-05-31 16:00,,2012-10-12 08:00,2012-10-15 16:00,,PT_Normal,,,,,5z78LY/990aeP6QZwGg5CQ,nVm+OMWdtU+cNV/6iEVSTQ,,,N,0,0,,,2012-05-05 12:17,2012-05-16 14:02,admin,admin
261,129711,3769,20038,3746,1,0,N,N,N,CP_Drtn,TT_Task,DT_FixedDUR2,RV_OK,TK_Active,H-3-360,Slab Pouring works,3779,795.2,59.2,4.8,4.4,6.6,11,8,0,0,0,,2012-05-11 00:00,,2012-08-23 11:12,2012-08-23 16:00,,2012-05-16 08:00,2012-05-16 12:48,2012-05-16 08:00,2012-05-16 12:48,2012-06-02 08:00,2012-06-02 16:00,,2012-08-23 11:12,2012-08-23 16:00,,PT_Normal,,,,,9K+xJtPk8USENxPhBTMl8A,lzLmH/i+a0yBQOSzcxFThA,,,N,4.4,0,,,2012-05-05 12:17,2012-05-16 14:02,admin,admin
262,129712,3769,20015,3746,1,0,N,N,N,CP_Drtn,TT_Task,DT_FixedDUR2,RV_OK,TK_NotStart,H-3-470,Slab steel works,3778,736,0,32,0,101,101,32,0,0,0,,,,2012-09-23 08:00,2012-09-26 16:00,,2012-06-23 08:00,2012-06-26 16:00,2012-06-23 08:00,2012-06-26 16:00,2012-06-23 08:00,2012-06-26 16:00,,2012-09-23 08:00,2012-09-26 16:00,,PT_Normal,,,,,P/UqpYRE2UyE0dgpvBuuMA,RclEthIV+keLPY0fAE7HhA,,,N,0,0,,,2012-05-05 12:17,2012-05-16 14:02,admin,admin
263,129713,3769,20015,3746,1,0,N,N,N,CP_Drtn,TT_Task,DT_FixedDUR2,RV_OK,TK_NotStart,H-3-500,Slab Pouring works,3779,736,0,8,0,11,11,8,0,0,0,,,,2012-09-28 08:00,2012-09-28 16:00,,2012-06-28 08:00,2012-06-28 16:00,2012-06-28 08:00,2012-06-28 16:00,2012-06-28 08:00,2012-06-28 16:00,,2012-09-28 08:00,2012-09-28 16:00,,PT_Normal,,,,,qNzHOuUiB0e1sBm2PXJi+g,v3XOYaKxRU2RLXTxEkl+fg,,,N,0,0,,,2012-05-05 12:17,2012-05-16 14:02,admin,admin
264,129714,3769,20009,3746,1,100,N,N,N,CP_Drtn,TT_Task,DT_FixedDUR2,RV_OK,TK_Complete,H-3-90,R.C footings Pouring works,3779,,,0,8,0,8,8,0,0,0,,2012-04-04 00:00,2012-04-04 00:00,,,,,,,,2012-04-21 08:00,2012-04-21 16:00,,,,,PT_Normal,,,,,f4c31VvOPkSZdTHTjGMUgQ,XsT38gA9BUuLuLLIL1B1PA,,,N,8,0,,,2012-05-05 12:17,2012-05-16 14:02,admin,admin
265,129715,3769,20009,3746,1,100,N,N,N,CP_Drtn,TT_Task,DT_FixedDUR2,RV_OK,TK_Complete,H-3-60,R.C footings steel works,3778,,,0,56,0,56,56,0,0,0,,2012-03-30 00:00,2012-04-02 00:00,,,,,,,,2012-05-06 08:00,2012-05-12 16:00,,,,,PT_Normal,,,,,YGNDzu+Up02l7FtG8GM2LQ,YM+zIR85jkSOUX2kJkq1Zg,,,N,56,0,,,2012-05-05 12:17,2012-05-16 14:02,admin,admin
266,129716,3769,19998,3746,1,100,N,N,N,CP_Drtn,TT_Task,DT_FixedDUR2,RV_OK,TK_Complete,H-4-40,R.C footings form work,3777,,,0,48,0,48,56,0,0,0,,2012-03-28 00:00,2012-04-03 00:00,,,,,,,,2012-04-28 08:00,2012-05-04 16:00,,,,,PT_Normal,,,,,43uUyJzfB0W9v+GexPZtiQ,pI5YX2z4R0G8sUa4oXL2sQ,,,N,48,0,,,2012-05-05 12:17,2012-05-16 14:02,admin,admin
267,129717,3769,19999,3746,1,100,N,N,N,CP_Drtn,TT_Task,DT_FixedDUR2,RV_OK,TK_Complete,H-4-100,Columns form works,3777,,,0,18,0,18,32,0,0,0,,2012-04-11 00:00,2012-04-16 00:00,,,,,,,,2012-05-14 08:00,2012-05-17 16:00,,,,,PT_Normal,,,,,OutJ/4aj/k+KOw0zHpvZRA,ZNxJohhQ0kig/lH/L0DlNA,,,N,18,0,,,2012-05-05 12:17,2012-05-16 14:02,admin,admin
268,129718,3769,19999,3746,1,100,N,N,N,CP_Drtn,TT_Task,DT_FixedDUR2,RV_OK,TK_Complete,H-4-160,Slab form works,3777,,,0,83,0,83,120,0,0,0,,2012-04-23 00:00,2012-05-06 00:00,,,,,,,,2012-05-12 08:00,2012-05-26 16:00,,,,,PT_Normal,,,,,4qa6ONS9R0Gw7Flp1O/ZHw,+gwC3XvkS0Sgo6GLcekxqA,,,N,83,0,,,2012-05-05 12:17,2012-05-16 14:02,admin,admin
269,129719,3769,20000,3746,1,0,N,N,N,CP_Drtn,TT_Task,DT_FixedDUR2,RV_OK,TK_NotStart,H-4-220,Columns form works,3777,536,0,32,0,10,10,32,0,0,0,,,,2012-07-23 08:00,2012-07-26 16:00,,2012-05-17 08:00,2012-05-20 16:00,2012-05-17 08:00,2012-05-20 16:00,2012-05-17 08:00,2012-05-20 16:00,,2012-07-23 08:00,2012-07-26 16:00,,PT_Normal,,,,,dk6kh7zIR0K9+KB6ze+mlg,yM6AWXiM8EeF4M6wL9YRBg,,,N,0,0,,,2012-05-05 12:17,2012-05-16 14:02,admin,admin
270,129720,3769,20000,3746,1,0,N,N,N,CP_Drtn,TT_Task,DT_FixedDUR2,RV_OK,TK_NotStart,H-4-290,Slab form works,3777,536,0,120,0,83,83,120,0,0,0,,,,2012-08-02 08:00,2012-08-16 16:00,,2012-05-27 08:00,2012-06-10 16:00,2012-05-27 08:00,2012-06-10 16:00,2012-05-27 08:00,2012-06-10 16:00,,2012-08-02 08:00,2012-08-16 16:00,,PT_Normal,,,,,YkE/REuNIE2Wd4ySXk2iGA,eUmZ5ZkllU65T/nqcI1pdQ,,,N,0,0,,,2012-05-05 12:17,2012-05-16 14:02,admin,admin
271,129721,3769,20023,3746,1,0,N,N,N,CP_Drtn,TT_Task,DT_FixedDUR2,RV_OK,TK_NotStart,H-4-380,Columns form works,3777,536,0,64,0,10,10,64,0,0,0,,,,2012-08-24 08:00,2012-08-31 16:00,,2012-06-18 08:00,2012-06-25 16:00,2012-06-18 08:00,2012-06-25 16:00,2012-06-18 08:00,2012-06-25 16:00,,2012-08-24 08:00,2012-08-31 16:00,,PT_Normal,,,,,q53ra8Yea0K+hPk4PdILAg,iWO+P2EnB0a/PHSeVSUlPA,,,N,0,0,,,2012-05-05 12:17,2012-05-16 14:02,admin,admin
272,129722,3769,20023,3746,1,0,N,N,N,CP_Drtn,TT_Task,DT_FixedDUR2,RV_OK,TK_NotStart,H-4-450,Slab form works,3777,536,0,120,0,83,83,120,0,0,0,,,,2012-09-07 08:00,2012-09-21 16:00,,2012-07-02 08:00,2012-07-16 16:00,2012-07-02 08:00,2012-07-16 16:00,2012-07-02 08:00,2012-07-16 16:00,,2012-09-07 08:00,2012-09-21 16:00,,PT_Normal,,,,,qIjT+34BF069PX685OzA/w,Oz+YL2zHMk+k+YZGY/Un2w,,,N,0,0,,,2012-05-05 12:17,2012-05-16 14:02,admin,admin
273,129723,3769,19964,3746,1,0,N,N,N,CP_Drtn,TT_Task,DT_FixedDUR2,RV_OK,TK_NotStart,H-4-250,Footing insulation,3780,1008,0,56,0,7,7,56,0,0,0,,,,2012-09-24 08:00,2012-09-30 16:00,,2012-05-21 08:00,2012-05-27 16:00,2012-05-21 08:00,2012-05-27 16:00,2012-05-21 08:00,2012-05-27 16:00,,2012-09-24 08:00,2012-09-30 16:00,,PT_Normal,,,,,6Slp/J0GtUyXtENaUMZQhA,mt0MUnseVkiE5PyRXG/wQg,,,N,0,0,,,2012-05-05 12:17,2012-05-16 14:02,admin,admin
274,129724,3769,19964,3746,1,0,N,N,N,CP_Drtn,TT_Task,DT_FixedDUR2,RV_OK,TK_NotStart,H-4-510,Water proofing membrane,3780,536,0,56,0,27,27,56,0,0,0,,,,2012-09-29 08:00,2012-10-05 16:00,,2012-07-24 08:00,2012-07-30 16:00,2012-07-24 08:00,2012-07-30 16:00,2012-07-24 08:00,2012-07-30 16:00,,2012-09-29 08:00,2012-10-05 16:00,,PT_Normal,,,,,csRxn9TLs0ORVul1sRxrkQ,kbz1uXPQU0KVAg15ehHgQg,,,N,0,0,,,2012-05-05 12:17,2012-05-16 14:02,admin,admin
275,129725,3769,19964,3746,1,0,N,N,N,CP_Drtn,TT_Task,DT_FixedDUR2,RV_OK,TK_NotStart,H-4-530,Heat insulation,3780,472,0,24,0,6,6,24,0,0,0,,,,2012-10-07 08:00,2012-10-09 16:00,,2012-08-09 08:00,2012-08-11 16:00,2012-08-09 08:00,2012-08-11 16:00,2012-08-09 08:00,2012-08-11 16:00,,2012-10-07 08:00,2012-10-09 16:00,,PT_Normal,,,,,9Jy/WZ2xT02uT4edQPWsog,C1iHtNVbN0+F7KSL2eeqgg,,,N,0,0,,,2012-05-05 12:17,2012-05-16 14:02,admin,admin
276,129726,3769,19939,3746,1,100,N,N,N,CP_Drtn,TT_Task,DT_FixedDUR2,RV_OK,TK_Complete,H-4-10,P.C  footings formwork,3777,,,0,36,0,36,40,0,0,0,,2012-03-18 00:00,2012-03-18 00:00,,,,,,,,2012-04-28 08:00,2012-05-02 16:00,,,,,PT_Normal,,,,,6g3Yk9KRnU6AeyL38t2EFw,QkJM3ZPVqEGwSmfvMqX1DQ,,,N,36,0,,,2012-05-05 12:17,2012-05-16 14:02,admin,admin
277,129727,3769,19939,3746,1,0,N,N,N,CP_Drtn,TT_Task,DT_FixedDUR2,RV_OK,TK_NotStart,H-4-320,Slab on grade work,3777,1008,0,40,0,9,9,40,0,0,0,,,,2012-10-09 08:00,2012-10-13 16:00,,2012-06-05 08:00,2012-06-09 16:00,2012-06-05 08:00,2012-06-09 16:00,2012-06-05 08:00,2012-06-09 16:00,,2012-10-09 08:00,2012-10-13 16:00,,PT_Normal,,,,,RTpAFc2PWU2P8SWSjgtuOA,VZ2fPoqzH0aV/YokfJGCKA,,,N,0,0,,,2012-05-05 12:17,2012-05-16 14:02,admin,admin
278,129728,3769,19964,3746,1,0,N,N,N,CP_Drtn,TT_Task,DT_FixedDUR2,RV_OK,TK_NotStart,H-4-550,Slopped plain concrete,3779,472,0,24,0,6,6,24,0,0,0,,,,2012-10-11 08:00,2012-10-13 16:00,,2012-08-13 08:00,2012-08-15 16:00,2012-08-13 08:00,2012-08-15 16:00,2012-08-13 08:00,2012-08-15 16:00,,2012-10-11 08:00,2012-10-13 16:00,,PT_Normal,,,,,tvwWoSAaUU+ZwLUKIBOSIA,32HKISWPeEefuKpoZggc7g,,,N,0,0,,,2012-05-05 12:17,2012-05-16 14:02,admin,admin
279,129729,3769,19999,3746,1,100,N,N,N,CP_Drtn,TT_Task,DT_FixedDUR2,RV_OK,TK_Complete,H-4-150,Columns Pouring works,3779,,,0,4,0,4,8,0,0,0,,2012-04-20 00:00,2012-04-20 00:00,,,,,,,,2012-05-31 08:00,2012-05-31 16:00,,,,,PT_Normal,,,,,P2Orz26JaUywV4lIjFsnGg,d/ckyV+g4UKXOgwhJQnHTw,,,N,4,0,,,2012-05-05 12:17,2012-05-16 14:02,admin,admin
280,129730,3769,19999,3746,1,100,N,N,N,CP_Drtn,TT_Task,DT_FixedDUR2,RV_OK,TK_Complete,H-4-120,Columns Steel works,3778,,,0,31,0,31,24,0,0,0,,2012-04-16 00:00,2012-04-19 00:00,,,,,,,,2012-05-19 08:00,2012-05-21 16:00,,,,,PT_Normal,,,,,fVElzPLrtUy4VXSfERfABw,uPz+qTQKd02Fj4tAzvrhbA,,,N,31,0,,,2012-05-05 12:17,2012-05-16 14:02,admin,admin
281,129731,3769,20000,3746,1,0,N,N,N,CP_Drtn,TT_Task,DT_FixedDUR2,RV_OK,TK_NotStart,H-4-280,Columns Pouring works,3779,536,0,8,0,2,2,8,0,0,0,,,,2012-08-01 08:00,2012-08-01 16:00,,2012-05-26 08:00,2012-05-26 16:00,2012-05-26 08:00,2012-05-26 16:00,2012-05-26 08:00,2012-05-26 16:00,,2012-08-01 08:00,2012-08-01 16:00,,PT_Normal,,,,,BZkgDniNY0mGT8CF3bJF+Q,Pc5hcNIehkCeZBcH2atIQw,,,N,0,0,,,2012-05-05 12:17,2012-05-16 14:02,admin,admin
282,129732,3769,20000,3746,1,0,N,N,N,CP_Drtn,TT_Task,DT_FixedDUR2,RV_OK,TK_NotStart,H-4-240,Columns Steel works,3778,536,0,24,0,16,16,24,0,0,0,,,,2012-07-28 08:00,2012-07-30 16:00,,2012-05-22 08:00,2012-05-24 16:00,2012-05-22 08:00,2012-05-24 16:00,2012-05-22 08:00,2012-05-24 16:00,,2012-07-28 08:00,2012-07-30 16:00,,PT_Normal,,,,,auRz/WI1qkOh0/G5RfdDcw,NBZOAeSUoEqQsGX27leNvg,,,N,0,0,,,2012-05-05 12:17,2012-05-16 14:02,admin,admin
283,129733,3769,20023,3746,1,0,N,N,N,CP_Drtn,TT_Task,DT_FixedDUR2,RV_OK,TK_NotStart,H-4-440,Columns Pouring works,3779,536,0,8,0,2,2,8,0,0,0,,,,2012-09-06 08:00,2012-09-06 16:00,,2012-07-01 08:00,2012-07-01 16:00,2012-07-01 08:00,2012-07-01 16:00,2012-07-01 08:00,2012-07-01 16:00,,2012-09-06 08:00,2012-09-06 16:00,,PT_Normal,,,,,OO3sehdE+kiY9Z4SY2EUhw,rDyH+TIPqkeCTadjVud1Bg,,,N,0,0,,,2012-05-05 12:17,2012-05-16 14:02,admin,admin
284,129734,3769,20023,3746,1,0,N,N,N,CP_Drtn,TT_Task,DT_FixedDUR2,RV_OK,TK_NotStart,H-4-410,Columns Steel works,3778,536,0,24,0,16,16,24,0,0,0,,,,2012-09-02 08:00,2012-09-04 16:00,,2012-06-27 08:00,2012-06-29 16:00,2012-06-27 08:00,2012-06-29 16:00,2012-06-27 08:00,2012-06-29 16:00,,2012-09-02 08:00,2012-09-04 16:00,,PT_Normal,,,,,FFY6+IMUW0GpsQ3ETEMvxA,0+bvzzEmR0WL5KNVKXS8tA,,,N,0,0,,,2012-05-05 12:17,2012-05-16 14:02,admin,admin
285,129735,3769,19999,3746,1,100,N,N,N,CP_Drtn,TT_Task,DT_FixedDUR2,RV_OK,TK_Complete,H-4-180,Slab steel works,3778,,,0,80,0,80,32,0,0,0,,2012-05-07 00:00,2012-05-12 00:00,,,,,,,,2012-05-28 08:00,2012-05-31 16:00,,,,,PT_Normal,,,,,wU3g3O+m8UOCUEc0wBmwBA,IrTGOfYwWU2jVKb8VeGwkw,,,N,80,0,,,2012-05-05 12:17,2012-05-16 14:02,admin,admin
286,129736,3769,19999,3746,1,0,N,N,N,CP_Drtn,TT_Task,DT_FixedDUR2,RV_OK,TK_NotStart,H-4-210,Slab Pouring works,3779,536,0,8,0,8,8,8,0,0,0,,,,2012-07-22 08:00,2012-07-22 16:00,,2012-05-16 08:00,2012-05-16 16:00,2012-05-16 08:00,2012-05-16 16:00,2012-05-16 08:00,2012-05-16 16:00,,2012-07-22 08:00,2012-07-22 16:00,,PT_Normal,,,,,G73mxMex50e6RfFljQWmnA,skf+OFfbMUaZgqmDXZjpeg,,,N,0,0,,,2012-05-05 12:17,2012-05-16 14:02,admin,admin
287,129737,3769,20000,3746,1,0,N,N,N,CP_Drtn,TT_Task,DT_FixedDUR2,RV_OK,TK_NotStart,H-4-330,Slab steel works,3778,536,0,32,0,80,80,32,0,0,0,,,,2012-08-18 08:00,2012-08-21 16:00,,2012-06-12 08:00,2012-06-15 16:00,2012-06-12 08:00,2012-06-15 16:00,2012-06-12 08:00,2012-06-15 16:00,,2012-08-18 08:00,2012-08-21 16:00,,PT_Normal,,,,,RDr+xJWP3UCHgfFXWXlTSA,nVm+OMWdtU+cNV/6iEVSTQ,,,N,0,0,,,2012-05-05 12:17,2012-05-16 14:02,admin,admin
288,129738,3769,20000,3746,1,0,N,N,N,CP_Drtn,TT_Task,DT_FixedDUR2,RV_OK,TK_NotStart,H-4-360,Slab Pouring works,3779,536,0,8,0,8,8,8,0,0,0,,,,2012-08-23 08:00,2012-08-23 16:00,,2012-06-17 08:00,2012-06-17 16:00,2012-06-17 08:00,2012-06-17 16:00,2012-06-17 08:00,2012-06-17 16:00,,2012-08-23 08:00,2012-08-23 16:00,,PT_Normal,,,,,pTidbVQK+Ui8sbUagKeWUQ,lzLmH/i+a0yBQOSzcxFThA,,,N,0,0,,,2012-05-05 12:17,2012-05-16 14:02,admin,admin
289,129739,3769,20023,3746,1,0,N,N,N,CP_Drtn,TT_Task,DT_FixedDUR2,RV_OK,TK_NotStart,H-4-470,Slab steel works,3778,536,0,32,0,80,80,32,0,0,0,,,,2012-09-23 08:00,2012-09-26 16:00,,2012-07-18 08:00,2012-07-21 16:00,2012-07-18 08:00,2012-07-21 16:00,2012-07-18 08:00,2012-07-21 16:00,,2012-09-23 08:00,2012-09-26 16:00,,PT_Normal,,,,,ECWRdQBVS0iodRwFbjmRbA,RclEthIV+keLPY0fAE7HhA,,,N,0,0,,,2012-05-05 12:17,2012-05-16 14:02,admin,admin
290,129740,3769,20023,3746,1,0,N,N,N,CP_Drtn,TT_Task,DT_FixedDUR2,RV_OK,TK_NotStart,H-4-500,Slab Pouring works,3779,536,0,8,0,8,8,8,0,0,0,,,,2012-09-28 08:00,2012-09-28 16:00,,2012-07-23 08:00,2012-07-23 16:00,2012-07-23 08:00,2012-07-23 16:00,2012-07-23 08:00,2012-07-23 16:00,,2012-09-28 08:00,2012-09-28 16:00,,PT_Normal,,,,,GfvOPRbBJkqY9TJn2BjY6Q,v3XOYaKxRU2RLXTxEkl+fg,,,N,0,0,,,2012-05-05 12:17,2012-05-16 14:02,admin,admin
291,129741,3769,19998,3746,1,100,N,N,N,CP_Drtn,TT_Task,DT_FixedDUR2,RV_OK,TK_Complete,H-4-90,R.C footings Pouring works,3779,,,0,6,0,6,8,0,0,0,,2012-04-08 00:00,2012-04-08 00:00,,,,,,,,2012-05-21 08:00,2012-05-21 16:00,,,,,PT_Normal,,,,,emaRHE8luUyQqNZnYWnnAg,XsT38gA9BUuLuLLIL1B1PA,,,N,6,0,,,2012-05-05 12:17,2012-05-16 14:02,admin,admin
292,129742,3769,19998,3746,1,100,N,N,N,CP_Drtn,TT_Task,DT_FixedDUR2,RV_OK,TK_Complete,H-4-60,R.C footings steel works,3778,,,0,43,0,43,56,0,0,0,,2012-04-04 00:00,2012-04-07 00:00,,,,,,,,2012-05-06 08:00,2012-05-12 16:00,,,,,PT_Normal,,,,,H05kfwGBZ0yiprx7739E8w,YM+zIR85jkSOUX2kJkq1Zg,,,N,43,0,,,2012-05-05 12:17,2012-05-16 14:02,admin,admin
293,129743,3769,19997,3746,1,100,N,N,N,CP_Drtn,TT_Task,DT_FixedDUR2,RV_OK,TK_Complete,H-5-40,R.C footings form work,3777,,,0,82,0,82,56,0,0,0,,2012-03-25 00:00,2012-03-30 00:00,,,,,,,,2012-04-28 08:00,2012-05-04 16:00,,,,,PT_Normal,,,,,bS5U7lnAwEqS/AboR0D9Fg,pI5YX2z4R0G8sUa4oXL2sQ,,,N,82,0,,,2012-05-05 12:17,2012-05-16 14:02,admin,admin
294,129744,3769,19990,3746,1,100,N,N,N,CP_Drtn,TT_Task,DT_FixedDUR2,RV_OK,TK_Complete,H-5-100,Columns form works,3777,,,0,30,0,30,32,0,0,0,,2012-04-06 00:00,2012-04-10 00:00,,,,,,,,2012-05-14 08:00,2012-05-17 16:00,,,,,PT_Normal,,,,,3v5A7cmZxkeqU5yj+/Umhw,ZNxJohhQ0kig/lH/L0DlNA,,,N,30,0,,,2012-05-05 12:17,2012-05-16 14:02,admin,admin
295,129745,3769,19990,3746,1,100,N,N,N,CP_Drtn,TT_Task,DT_FixedDUR2,RV_OK,TK_Complete,H-5-160,Slab form works,3777,,,0,140,0,140,120,0,0,0,,2012-04-15 00:00,2012-04-19 00:00,,,,,,,,2012-05-23 08:00,2012-06-06 16:00,,,,,PT_Normal,,,,,jFT8mRhLu0qaQqGQTDebtQ,+gwC3XvkS0Sgo6GLcekxqA,,,N,140,0,,,2012-05-05 12:17,2012-05-16 14:02,admin,admin
296,129746,3769,20008,3746,1,100,N,N,N,CP_Drtn,TT_Task,DT_FixedDUR2,RV_OK,TK_Complete,H-5-220,Columns form works,3777,,,0,28,0,28,32,0,0,0,,2012-04-25 00:00,2012-04-29 00:00,,,,,,,,2012-05-07 12:00,2012-05-11 12:00,,,,,PT_Normal,,,,,rjp9bxFOukeSO/C8b/RWyw,yM6AWXiM8EeF4M6wL9YRBg,,,N,28,0,,,2012-05-05 12:17,2012-05-16 14:02,admin,admin
297,129747,3769,20008,3746,1,100,N,N,N,CP_Drtn,TT_Task,DT_FixedDUR2,RV_OK,TK_Complete,H-5-290,Slab form works,3777,,,0,140,0,140,120,0,0,0,,2012-05-04 00:00,2012-05-09 00:00,,,,,,,,2012-05-13 08:00,2012-05-27 16:00,,,,,PT_Normal,,,,,+GiaHfMGbkynzljOlFBwTQ,eUmZ5ZkllU65T/nqcI1pdQ,,,N,140,0,,,2012-05-05 12:17,2012-05-16 14:02,admin,admin
298,129748,3769,20031,3746,1,0,N,N,N,CP_Drtn,TT_Task,DT_FixedDUR2,RV_OK,TK_NotStart,H-5-380,Columns form works,3777,736,0,64,0,28,28,64,0,0,0,,,,2012-08-24 08:00,2012-08-31 16:00,,2012-05-24 08:00,2012-05-31 16:00,2012-05-24 08:00,2012-05-31 16:00,2012-05-24 08:00,2012-05-31 16:00,,2012-08-24 08:00,2012-08-31 16:00,,PT_Normal,,,,,A6CwimzmFECfAP6ncM99cA,iWO+P2EnB0a/PHSeVSUlPA,,,N,0,0,,,2012-05-05 12:17,2012-05-16 14:02,admin,admin
299,129749,3769,20031,3746,1,0,N,N,N,CP_Drtn,TT_Task,DT_FixedDUR2,RV_OK,TK_NotStart,H-5-450,Slab form works,3777,736,0,120,0,140,140,120,0,0,0,,,,2012-09-07 08:00,2012-09-21 16:00,,2012-06-07 08:00,2012-06-21 16:00,2012-06-07 08:00,2012-06-21 16:00,2012-06-07 08:00,2012-06-21 16:00,,2012-09-07 08:00,2012-09-21 16:00,,PT_Normal,,,,,FBJl0SVg5EGvWXTcB6TItQ,Oz+YL2zHMk+k+YZGY/Un2w,,,N,0,0,,,2012-05-05 12:17,2012-05-16 14:02,admin,admin
300,129750,3769,19985,3746,1,0,N,N,N,CP_Drtn,TT_Task,DT_FixedDUR2,RV_OK,TK_NotStart,H-5-250,Footing insulation,3780,1048,0,56,0,12,12,56,0,0,0,,,,2012-09-24 08:00,2012-09-30 16:00,,2012-05-16 08:00,2012-05-22 16:00,2012-05-16 08:00,2012-05-22 16:00,2012-05-16 08:00,2012-05-22 16:00,,2012-09-24 08:00,2012-09-30 16:00,,PT_Normal,,,,,ARoEUNrD5UynpbcCiZW4kg,mt0MUnseVkiE5PyRXG/wQg,,,N,0,0,,,2012-05-05 12:17,2012-05-16 14:02,admin,admin
301,129751,3769,19985,3746,1,0,N,N,N,CP_Drtn,TT_Task,DT_FixedDUR2,RV_OK,TK_NotStart,H-5-510,Water proofing membrane,3780,736,0,56,0,46,46,56,0,0,0,,,,2012-09-29 08:00,2012-10-05 16:00,,2012-06-29 08:00,2012-07-05 16:00,2012-06-29 08:00,2012-07-05 16:00,2012-06-29 08:00,2012-07-05 16:00,,2012-09-29 08:00,2012-10-05 16:00,,PT_Normal,,,,,jLJBWS6qkkCkvR07kL9evg,kbz1uXPQU0KVAg15ehHgQg,,,N,0,0,,,2012-05-05 12:17,2012-05-16 14:02,admin,admin
302,129752,3769,19985,3746,1,0,N,N,N,CP_Drtn,TT_Task,DT_FixedDUR2,RV_OK,TK_NotStart,H-5-530,Heat insulation,3780,472,0,24,0,10,10,24,0,0,0,,,,2012-10-07 08:00,2012-10-09 16:00,,2012-08-09 08:00,2012-08-11 16:00,2012-08-09 08:00,2012-08-11 16:00,2012-08-09 08:00,2012-08-11 16:00,,2012-10-07 08:00,2012-10-09 16:00,,PT_Normal,,,,,OW7qIX3Psk6IZSmhh1BNcQ,C1iHtNVbN0+F7KSL2eeqgg,,,N,0,0,,,2012-05-05 12:17,2012-05-16 14:02,admin,admin
303,129753,3769,19947,3746,1,100,N,N,N,CP_Drtn,TT_Task,DT_FixedDUR2,RV_OK,TK_Complete,H-5-10,P.C  footings formwork,3777,,,0,61,0,61,40,0,0,0,,2012-03-18 00:00,2012-03-18 00:00,,,,,,,,2012-04-28 08:00,2012-05-02 16:00,,,,,PT_Normal,,,,,UsYlDS5u/0eGu4u0huRrAA,QkJM3ZPVqEGwSmfvMqX1DQ,,,N,61,0,,,2012-05-05 12:17,2012-05-16 14:02,admin,admin
304,129754,3769,19947,3746,1,0,N,N,N,CP_Drtn,TT_Task,DT_FixedDUR2,RV_OK,TK_NotStart,H-5-320,Slab on grade work,3777,1048,0,40,0,15,15,40,0,0,0,,,,2012-10-09 08:00,2012-10-13 16:00,,2012-05-31 08:00,2012-06-04 16:00,2012-05-31 08:00,2012-06-04 16:00,2012-05-31 08:00,2012-06-04 16:00,,2012-10-09 08:00,2012-10-13 16:00,,PT_Normal,,,,,banofBdhtEKt983EKPzQag,VZ2fPoqzH0aV/YokfJGCKA,,,N,0,0,,,2012-05-05 12:17,2012-05-16 14:02,admin,admin
305,129755,3769,19985,3746,1,0,N,N,N,CP_Drtn,TT_Task,DT_FixedDUR2,RV_OK,TK_NotStart,H-5-550,Slopped plain concrete,3779,472,0,24,0,10,10,24,0,0,0,,,,2012-10-11 08:00,2012-10-13 16:00,,2012-08-13 08:00,2012-08-15 16:00,2012-08-13 08:00,2012-08-15 16:00,2012-08-13 08:00,2012-08-15 16:00,,2012-10-11 08:00,2012-10-13 16:00,,PT_Normal,,,,,Nse+JoGzIkSZFU1JPQYJbg,32HKISWPeEefuKpoZggc7g,,,N,0,0,,,2012-05-05 12:17,2012-05-16 14:02,admin,admin
306,129756,3769,19990,3746,1,100,N,N,N,CP_Drtn,TT_Task,DT_FixedDUR2,RV_OK,TK_Complete,H-5-150,Columns Pouring works,3779,,,0,6,0,6,8,0,0,0,,2012-04-14 00:00,2012-04-14 00:00,,,,,,,,2012-05-31 08:00,2012-05-31 16:00,,,,,PT_Normal,,,,,3vYFOHfkOk6mrS5tw3FrOQ,d/ckyV+g4UKXOgwhJQnHTw,,,N,6,0,,,2012-05-05 12:17,2012-05-16 14:02,admin,admin
307,129757,3769,19990,3746,1,100,N,N,N,CP_Drtn,TT_Task,DT_FixedDUR2,RV_OK,TK_Complete,H-5-120,Columns Steel works,3778,,,0,53,0,53,24,0,0,0,,2012-04-10 00:00,2012-04-13 00:00,,,,,,,,2012-05-19 08:00,2012-05-21 16:00,,,,,PT_Normal,,,,,G4HADAgo2UOIt/p+j81SKw,uPz+qTQKd02Fj4tAzvrhbA,,,N,53,0,,,2012-05-05 12:17,2012-05-16 14:02,admin,admin
308,129758,3769,20008,3746,1,100,N,N,N,CP_Drtn,TT_Task,DT_FixedDUR2,RV_OK,TK_Complete,H-5-280,Columns Pouring works,3779,,,0,7,0,7,8,0,0,0,,2012-05-03 00:00,2012-05-03 00:00,,,,,,,,2012-05-12 08:00,2012-05-12 16:00,,,,,PT_Normal,,,,,Gs0c9K3t00uIMJNfc2Wfgw,Pc5hcNIehkCeZBcH2atIQw,,,N,7,0,,,2012-05-05 12:17,2012-05-16 14:02,admin,admin
309,129759,3769,20008,3746,1,100,N,N,N,CP_Drtn,TT_Task,DT_FixedDUR2,RV_OK,TK_Complete,H-5-240,Columns Steel works,3778,,,0,46,0,46,24,0,0,0,,2012-04-30 00:00,2012-05-02 00:00,,,,,,,,2012-05-12 12:00,2012-05-15 12:00,,,,,PT_Normal,,,,,pwei7Y/VUUGeTqs0lkPvPg,NBZOAeSUoEqQsGX27leNvg,,,N,46,0,,,2012-05-05 12:17,2012-05-16 14:02,admin,admin
310,129760,3769,20031,3746,1,0,N,N,N,CP_Drtn,TT_Task,DT_FixedDUR2,RV_OK,TK_NotStart,H-5-440,Columns Pouring works,3779,736,0,8,0,7,7,8,0,0,0,,,,2012-09-06 08:00,2012-09-06 16:00,,2012-06-06 08:00,2012-06-06 16:00,2012-06-06 08:00,2012-06-06 16:00,2012-06-06 08:00,2012-06-06 16:00,,2012-09-06 08:00,2012-09-06 16:00,,PT_Normal,,,,,Tg8zJ2z7YUSzg+uFPxZMGQ,rDyH+TIPqkeCTadjVud1Bg,,,N,0,0,,,2012-05-05 12:17,2012-05-16 14:02,admin,admin
311,129761,3769,20031,3746,1,0,N,N,N,CP_Drtn,TT_Task,DT_FixedDUR2,RV_OK,TK_NotStart,H-5-410,Columns Steel works,3778,736,0,24,0,46,46,24,0,0,0,,,,2012-09-02 08:00,2012-09-04 16:00,,2012-06-02 08:00,2012-06-04 16:00,2012-06-02 08:00,2012-06-04 16:00,2012-06-02 08:00,2012-06-04 16:00,,2012-09-02 08:00,2012-09-04 16:00,,PT_Normal,,,,,5xQwLSOYBk2u3X9f4UBB+Q,0+bvzzEmR0WL5KNVKXS8tA,,,N,0,0,,,2012-05-05 12:17,2012-05-16 14:02,admin,admin
312,129762,3769,19990,3746,1,100,N,N,N,CP_Drtn,TT_Task,DT_FixedDUR2,RV_OK,TK_Complete,H-5-180,Slab steel works,3778,,,0,134,0,134,32,0,0,0,,2012-04-19 00:00,2012-04-22 00:00,,,,,,,,2012-06-08 08:00,2012-06-11 16:00,,,,,PT_Normal,,,,,2QhUUI27dUKWKhdMn3l6Vg,IrTGOfYwWU2jVKb8VeGwkw,,,N,134,0,,,2012-05-05 12:17,2012-05-16 14:02,admin,admin
313,129763,3769,19990,3746,1,100,N,N,N,CP_Drtn,TT_Task,DT_FixedDUR2,RV_OK,TK_Complete,H-5-210,Slab Pouring works,3779,,,0,14,0,14,8,0,0,0,,2012-04-23 00:00,2012-04-25 00:00,,,,,,,,2012-06-22 08:00,2012-06-22 16:00,,,,,PT_Normal,,,,,DA+fCDrKmUy8Mt3yZ8ttTg,skf+OFfbMUaZgqmDXZjpeg,,,N,14,0,,,2012-05-05 12:17,2012-05-16 14:02,admin,admin
314,129764,3769,20008,3746,1,100,N,N,N,CP_Drtn,TT_Task,DT_FixedDUR2,RV_OK,TK_Active,H-5-330,Slab steel works,3778,1208,1208,16,67,67,134,32,0,0,0,,2012-05-08 00:00,,2012-10-14 08:00,2012-10-15 16:00,,2012-05-16 08:00,2012-05-17 16:00,2012-05-16 08:00,2012-05-17 16:00,2012-05-29 08:00,2012-06-01 16:00,,2012-10-14 08:00,2012-10-15 16:00,,PT_Normal,,,,,vPMn6qEijkK+H6IvqTIxVA,nVm+OMWdtU+cNV/6iEVSTQ,,,N,67,0,,,2012-05-05 12:17,2012-05-16 14:02,admin,admin
315,129765,3769,20008,3746,1,0,N,N,N,CP_Drtn,TT_Task,DT_FixedDUR2,RV_OK,TK_Active,H-5-360,Slab Pouring works,3779,795.2,59.2,4.8,5.6,8.4,14,8,0,0,0,,2012-05-11 00:00,,2012-08-23 11:12,2012-08-23 16:00,,2012-05-16 08:00,2012-05-16 12:48,2012-05-16 08:00,2012-05-16 12:48,2012-06-03 08:00,2012-06-03 16:00,,2012-08-23 11:12,2012-08-23 16:00,,PT_Normal,,,,,pSnDpxpdl0+pePJxsjw5AQ,lzLmH/i+a0yBQOSzcxFThA,,,N,5.6,0,,,2012-05-05 12:17,2012-05-16 14:02,admin,admin
316,129766,3769,20031,3746,1,0,N,N,N,CP_Drtn,TT_Task,DT_FixedDUR2,RV_OK,TK_NotStart,H-5-470,Slab steel works,3778,736,0,32,0,134,134,32,0,0,0,,,,2012-09-23 08:00,2012-09-26 16:00,,2012-06-23 08:00,2012-06-26 16:00,2012-06-23 08:00,2012-06-26 16:00,2012-06-23 08:00,2012-06-26 16:00,,2012-09-23 08:00,2012-09-26 16:00,,PT_Normal,,,,,wt4XdCEp0U2txkXBHi1e7Q,RclEthIV+keLPY0fAE7HhA,,,N,0,0,,,2012-05-05 12:17,2012-05-16 14:02,admin,admin
317,129767,3769,20031,3746,1,0,N,N,N,CP_Drtn,TT_Task,DT_FixedDUR2,RV_OK,TK_NotStart,H-5-500,Slab Pouring works,3779,736,0,8,0,14,14,8,0,0,0,,,,2012-09-28 08:00,2012-09-28 16:00,,2012-06-28 08:00,2012-06-28 16:00,2012-06-28 08:00,2012-06-28 16:00,2012-06-28 08:00,2012-06-28 16:00,,2012-09-28 08:00,2012-09-28 16:00,,PT_Normal,,,,,iHY5R+6SbkWFtlEfIT/Okw,v3XOYaKxRU2RLXTxEkl+fg,,,N,0,0,,,2012-05-05 12:17,2012-05-16 14:02,admin,admin
318,129768,3769,19997,3746,1,100,N,N,N,CP_Drtn,TT_Task,DT_FixedDUR2,RV_OK,TK_Complete,H-5-90,R.C footings Pouring works,3779,,,0,10,0,10,8,0,0,0,,2012-04-04 00:00,2012-04-04 00:00,,,,,,,,2012-05-21 08:00,2012-05-21 16:00,,,,,PT_Normal,,,,,1HgULPnU7U6J4o/igG6rsA,XsT38gA9BUuLuLLIL1B1PA,,,N,10,0,,,2012-05-05 12:17,2012-05-16 14:02,admin,admin
319,129769,3769,19997,3746,1,100,N,N,N,CP_Drtn,TT_Task,DT_FixedDUR2,RV_OK,TK_Complete,H-5-60,R.C footings steel works,3778,,,0,74,0,74,56,0,0,0,,2012-03-31 00:00,2012-04-03 00:00,,,,,,,,2012-05-06 08:00,2012-05-12 16:00,,,,,PT_Normal,,,,,YvcJurvCqEG6fPvp5J9T0A,YM+zIR85jkSOUX2kJkq1Zg,,,N,74,0,,,2012-05-05 12:17,2012-05-16 14:02,admin,admin
320,129770,3769,20036,3746,1,100,N,N,N,CP_Drtn,TT_Task,DT_FixedDUR2,RV_OK,TK_Complete,H-6-40,R.C footings form work,3777,,,0,46,0,46,56,0,0,0,,2012-04-04 00:00,2012-04-09 00:00,,,,,,,,2012-04-28 08:00,2012-05-04 16:00,,,,,PT_Normal,,,,,iuL4TFg6NE6bcm9HZuxWxg,pI5YX2z4R0G8sUa4oXL2sQ,,,N,46,0,,,2012-05-05 12:17,2012-05-16 14:02,admin,admin
321,129771,3769,19993,3746,1,100,N,N,N,CP_Drtn,TT_Task,DT_FixedDUR2,RV_OK,TK_Complete,H-6-100,Columns form works,3777,,,0,16,0,16,32,0,0,0,,2012-04-15 00:00,2012-04-20 00:00,,,,,,,,2012-05-14 08:00,2012-05-17 16:00,,,,,PT_Normal,,,,,pPM33kJMLUO/fxlB1BG3ig,ZNxJohhQ0kig/lH/L0DlNA,,,N,16,0,,,2012-05-05 12:17,2012-05-16 14:02,admin,admin
322,129772,3769,19993,3746,1,100,N,N,N,CP_Drtn,TT_Task,DT_FixedDUR2,RV_OK,TK_Complete,H-6-160,Slab form works,3777,,,0,67,0,67,120,0,0,0,,2012-04-25 00:00,2012-04-29 00:00,,,,,,,,2012-05-07 09:36,2012-05-22 09:36,,,,,PT_Normal,,,,,FxCgryG6Z02mSwcnpkmsxA,+gwC3XvkS0Sgo6GLcekxqA,,,N,67,0,,,2012-05-05 12:17,2012-05-16 14:02,admin,admin
323,129773,3769,19992,3746,1,100,N,N,N,CP_Drtn,TT_Task,DT_FixedDUR2,RV_OK,TK_Complete,H-6-220,Columns form works,3777,,,0,8,0,8,32,0,0,0,,2012-05-06 00:00,2012-05-09 00:00,,,,,,,,2012-05-12 12:00,2012-05-16 12:00,,,,,PT_Normal,,,,,IqfylY7480aG5/Q2NDDw7A,yM6AWXiM8EeF4M6wL9YRBg,,,N,8,0,,,2012-05-05 12:17,2012-05-16 14:02,admin,admin
324,129774,3769,19992,3746,1,0,N,N,N,CP_Drtn,TT_Task,DT_FixedDUR2,RV_OK,TK_Active,H-6-290,Slab form works,3777,1180,0,36,46.9,20.1,67,120,0,0,0,,2012-05-12 00:00,,2012-10-10 12:00,2012-10-14 16:00,,2012-05-16 08:00,2012-05-20 12:00,2012-05-16 08:00,2012-05-20 12:00,2012-05-18 15:12,2012-06-02 15:12,,2012-10-10 12:00,2012-10-14 16:00,,PT_Normal,,,,,RyJZi4KchU2xdCTeAFuoPg,eUmZ5ZkllU65T/nqcI1pdQ,,,N,46.9,0,,,2012-05-05 12:17,2012-05-16 14:02,admin,admin
325,129775,3769,20017,3746,1,0,N,N,N,CP_Drtn,TT_Task,DT_FixedDUR2,RV_OK,TK_NotStart,H-6-380,Columns form works,3777,736,0,64,0,8,8,64,0,0,0,,,,2012-08-24 08:00,2012-08-31 16:00,,2012-05-24 08:00,2012-05-31 16:00,2012-05-24 08:00,2012-05-31 16:00,2012-05-24 08:00,2012-05-31 16:00,,2012-08-24 08:00,2012-08-31 16:00,,PT_Normal,,,,,2kgvujx5wEis+0l2lXHp7A,iWO+P2EnB0a/PHSeVSUlPA,,,N,0,0,,,2012-05-05 12:17,2012-05-16 14:02,admin,admin
326,129776,3769,20017,3746,1,0,N,N,N,CP_Drtn,TT_Task,DT_FixedDUR2,RV_OK,TK_NotStart,H-6-450,Slab form works,3777,736,0,120,0,67,67,120,0,0,0,,,,2012-09-07 08:00,2012-09-21 16:00,,2012-06-07 08:00,2012-06-21 16:00,2012-06-07 08:00,2012-06-21 16:00,2012-06-07 08:00,2012-06-21 16:00,,2012-09-07 08:00,2012-09-21 16:00,,PT_Normal,,,,,9Nj+UqRx+kOIte+DsbG7TA,Oz+YL2zHMk+k+YZGY/Un2w,,,N,0,0,,,2012-05-05 12:17,2012-05-16 14:02,admin,admin
327,129777,3769,19958,3746,1,0,N,N,N,CP_Drtn,TT_Task,DT_FixedDUR2,RV_OK,TK_NotStart,H-6-250,Footing insulation,3780,1048,0,56,0,7,7,56,0,0,0,,,,2012-09-24 08:00,2012-09-30 16:00,,2012-05-16 08:00,2012-05-22 16:00,2012-05-16 08:00,2012-05-22 16:00,2012-05-16 08:00,2012-05-22 16:00,,2012-09-24 08:00,2012-09-30 16:00,,PT_Normal,,,,,C4SE+IgyjEaRC9slcAXIRg,mt0MUnseVkiE5PyRXG/wQg,,,N,0,0,,,2012-05-05 12:17,2012-05-16 14:02,admin,admin
328,129778,3769,19958,3746,1,0,N,N,N,CP_Drtn,TT_Task,DT_FixedDUR2,RV_OK,TK_NotStart,H-6-510,Water proofing membrane,3780,736,0,56,0,25,25,56,0,0,0,,,,2012-09-29 08:00,2012-10-05 16:00,,2012-06-29 08:00,2012-07-05 16:00,2012-06-29 08:00,2012-07-05 16:00,2012-06-29 08:00,2012-07-05 16:00,,2012-09-29 08:00,2012-10-05 16:00,,PT_Normal,,,,,iH+0E5HvakyQZJ67/if/wQ,kbz1uXPQU0KVAg15ehHgQg,,,N,0,0,,,2012-05-05 12:17,2012-05-16 14:02,admin,admin
329,129779,3769,19958,3746,1,0,N,N,N,CP_Drtn,TT_Task,DT_FixedDUR2,RV_OK,TK_NotStart,H-6-530,Heat insulation,3780,472,0,24,0,6,6,24,0,0,0,,,,2012-10-07 08:00,2012-10-09 16:00,,2012-08-09 08:00,2012-08-11 16:00,2012-08-09 08:00,2012-08-11 16:00,2012-08-09 08:00,2012-08-11 16:00,,2012-10-07 08:00,2012-10-09 16:00,,PT_Normal,,,,,IFEyENjZGkmQuJCsoHCiVQ,C1iHtNVbN0+F7KSL2eeqgg,,,N,0,0,,,2012-05-05 12:17,2012-05-16 14:02,admin,admin
330,129780,3769,19955,3746,1,100,N,N,N,CP_Drtn,TT_Task,DT_FixedDUR2,RV_OK,TK_Complete,H-6-10,P.C  footings formwork,3777,,,0,34,0,34,40,0,0,0,,2012-03-18 00:00,2012-03-22 00:00,,,,,,,,2012-04-28 08:00,2012-05-02 16:00,,,,,PT_Normal,,,,,W62TcBJ8Eky8KCaevvSGTg,QkJM3ZPVqEGwSmfvMqX1DQ,,,N,34,0,,,2012-05-05 12:17,2012-05-16 14:02,admin,admin
331,129781,3769,19955,3746,1,0,N,N,N,CP_Drtn,TT_Task,DT_FixedDUR2,RV_OK,TK_NotStart,H-6-320,Slab on grade work,3777,1048,0,40,0,8,8,40,0,0,0,,,,2012-10-09 08:00,2012-10-13 16:00,,2012-05-31 08:00,2012-06-04 16:00,2012-05-31 08:00,2012-06-04 16:00,2012-05-31 08:00,2012-06-04 16:00,,2012-10-09 08:00,2012-10-13 16:00,,PT_Normal,,,,,nfhtlbEh4EulH2viAkmrAg,VZ2fPoqzH0aV/YokfJGCKA,,,N,0,0,,,2012-05-05 12:17,2012-05-16 14:02,admin,admin
332,129782,3769,19958,3746,1,0,N,N,N,CP_Drtn,TT_Task,DT_FixedDUR2,RV_OK,TK_NotStart,H-6-550,Slopped plain concrete,3779,472,0,24,0,6,6,24,0,0,0,,,,2012-10-11 08:00,2012-10-13 16:00,,2012-08-13 08:00,2012-08-15 16:00,2012-08-13 08:00,2012-08-15 16:00,2012-08-13 08:00,2012-08-15 16:00,,2012-10-11 08:00,2012-10-13 16:00,,PT_Normal,,,,,zDS2G2yMjU6eJ+zsu3soig,32HKISWPeEefuKpoZggc7g,,,N,0,0,,,2012-05-05 12:17,2012-05-16 14:02,admin,admin
333,129783,3769,19993,3746,1,100,N,N,N,CP_Drtn,TT_Task,DT_FixedDUR2,RV_OK,TK_Complete,H-6-150,Columns Pouring works,3779,,,0,3,0,3,8,0,0,0,,2012-04-24 00:00,2012-04-24 00:00,,,,,,,,2012-05-31 08:00,2012-05-31 16:00,,,,,PT_Normal,,,,,gd/1fNI5qEWYbJ04+2IhTw,d/ckyV+g4UKXOgwhJQnHTw,,,N,3,0,,,2012-05-05 12:17,2012-05-16 14:02,admin,admin
334,129784,3769,19993,3746,1,100,N,N,N,CP_Drtn,TT_Task,DT_FixedDUR2,RV_OK,TK_Complete,H-6-120,Columns Steel works,3778,,,0,28,0,28,24,0,0,0,,2012-04-20 00:00,2012-04-23 00:00,,,,,,,,2012-05-19 08:00,2012-05-21 16:00,,,,,PT_Normal,,,,,CjmYHDfRk0ylGs3+v4ByUg,uPz+qTQKd02Fj4tAzvrhbA,,,N,28,0,,,2012-05-05 12:17,2012-05-16 14:02,admin,admin
335,129785,3769,19992,3746,1,0,N,N,N,CP_Drtn,TT_Task,DT_FixedDUR2,RV_OK,TK_Active,H-6-280,Columns Pouring works,3779,1221.6,1221.6,2.4,1.4,0.6,2,8,0,0,0,,2012-05-11 00:00,,2012-10-15 13:36,2012-10-15 16:00,,2012-05-16 08:00,2012-05-16 10:24,2012-05-16 08:00,2012-05-16 10:24,2012-05-17 15:12,2012-05-18 15:12,,2012-10-15 13:36,2012-10-15 16:00,,PT_Normal,,,,,kYtm874dEk2NI0eYp24nqQ,Pc5hcNIehkCeZBcH2atIQw,,,N,1.4,0,,,2012-05-05 12:17,2012-05-16 14:02,admin,admin
336,129786,3769,19992,3746,1,0,N,N,N,CP_Drtn,TT_Task,DT_FixedDUR2,RV_OK,TK_Active,H-6-240,Columns Steel works,3778,1213.6,0,2.4,11.7,1.3,13,24,0,0,0,,2012-05-10 00:00,,2012-10-14 13:36,2012-10-14 16:00,,2012-05-16 08:00,2012-05-16 10:24,2012-05-16 08:00,2012-05-16 10:24,2012-05-17 12:00,2012-05-20 12:00,,2012-10-14 13:36,2012-10-14 16:00,,PT_Normal,,,,,hvX72GPFDkutsxdL9hW7ZA,NBZOAeSUoEqQsGX27leNvg,,,N,11.7,0,,,2012-05-05 12:17,2012-05-16 14:02,admin,admin
337,129787,3769,20017,3746,1,0,N,N,N,CP_Drtn,TT_Task,DT_FixedDUR2,RV_OK,TK_NotStart,H-6-440,Columns Pouring works,3779,736,0,8,0,2,2,8,0,0,0,,,,2012-09-06 08:00,2012-09-06 16:00,,2012-06-06 08:00,2012-06-06 16:00,2012-06-06 08:00,2012-06-06 16:00,2012-06-06 08:00,2012-06-06 16:00,,2012-09-06 08:00,2012-09-06 16:00,,PT_Normal,,,,,+OVS729Gakin8wS+PTux8g,rDyH+TIPqkeCTadjVud1Bg,,,N,0,0,,,2012-05-05 12:17,2012-05-16 14:02,admin,admin
338,129788,3769,20017,3746,1,0,N,N,N,CP_Drtn,TT_Task,DT_FixedDUR2,RV_OK,TK_NotStart,H-6-410,Columns Steel works,3778,736,0,24,0,13,13,24,0,0,0,,,,2012-09-02 08:00,2012-09-04 16:00,,2012-06-02 08:00,2012-06-04 16:00,2012-06-02 08:00,2012-06-04 16:00,2012-06-02 08:00,2012-06-04 16:00,,2012-09-02 08:00,2012-09-04 16:00,,PT_Normal,,,,,AB1fq4qXQU6hderFvxYypQ,0+bvzzEmR0WL5KNVKXS8tA,,,N,0,0,,,2012-05-05 12:17,2012-05-16 14:02,admin,admin
339,129789,3769,19993,3746,1,100,N,N,N,CP_Drtn,TT_Task,DT_FixedDUR2,RV_OK,TK_Complete,H-6-180,Slab steel works,3778,,,0,64,0,64,32,0,0,0,,2012-04-29 00:00,2012-05-02 00:00,,,,,,,,2012-05-23 09:36,2012-05-27 09:36,,,,,PT_Normal,,,,,3ipsH9UIJEqPlgRAzio8Ag,IrTGOfYwWU2jVKb8VeGwkw,,,N,64,0,,,2012-05-05 12:17,2012-05-16 14:02,admin,admin
340,129790,3769,19993,3746,1,100,N,N,N,CP_Drtn,TT_Task,DT_FixedDUR2,RV_OK,TK_Complete,H-6-210,Slab Pouring works,3779,,,0,7,0,7,8,0,0,0,,2012-05-03 00:00,2012-05-05 00:00,,,,,,,,2012-05-28 09:36,2012-05-29 09:36,,,,,PT_Normal,,,,,gUbBv0bIkU2bqgzqqvv2Jg,skf+OFfbMUaZgqmDXZjpeg,,,N,7,0,,,2012-05-05 12:17,2012-05-16 14:02,admin,admin
341,129791,3769,19992,3746,1,0,N,N,N,CP_Drtn,TT_Task,DT_FixedDUR2,RV_OK,TK_Active,H-6-330,Slab steel works,3778,768,0,16,32,32,64,32,0,0,0,,2012-05-13 00:00,,2012-08-20 08:00,2012-08-21 16:00,,2012-05-16 08:00,2012-05-17 16:00,2012-05-16 08:00,2012-05-17 16:00,2012-06-03 15:12,2012-06-07 15:12,,2012-08-20 08:00,2012-08-21 16:00,,PT_Normal,,,,,zqSZmuNN5UOPQmnSe/jfcA,nVm+OMWdtU+cNV/6iEVSTQ,,,N,32,0,,,2012-05-05 12:17,2012-05-16 14:02,admin,admin
342,129792,3769,19992,3746,1,0,N,N,N,CP_Drtn,TT_Task,DT_FixedDUR2,RV_OK,TK_NotStart,H-6-360,Slab Pouring works,3779,768,32,8,0,7,7,8,0,0,0,,,,2012-08-23 08:00,2012-08-23 16:00,,2012-05-19 08:00,2012-05-19 16:00,2012-05-19 08:00,2012-05-19 16:00,2012-05-19 08:00,2012-05-19 16:00,,2012-08-23 08:00,2012-08-23 16:00,,PT_Normal,,,,,JVF4OqZpsEKnJmVPwa0gXQ,lzLmH/i+a0yBQOSzcxFThA,,,N,0,0,,,2012-05-05 12:17,2012-05-16 14:02,admin,admin
343,129793,3769,20017,3746,1,0,N,N,N,CP_Drtn,TT_Task,DT_FixedDUR2,RV_OK,TK_NotStart,H-6-470,Slab steel works,3778,736,0,32,0,64,64,32,0,0,0,,,,2012-09-23 08:00,2012-09-26 16:00,,2012-06-23 08:00,2012-06-26 16:00,2012-06-23 08:00,2012-06-26 16:00,2012-06-23 08:00,2012-06-26 16:00,,2012-09-23 08:00,2012-09-26 16:00,,PT_Normal,,,,,FpxA8ehB9k+3UXFyfXxSLw,RclEthIV+keLPY0fAE7HhA,,,N,0,0,,,2012-05-05 12:17,2012-05-16 14:02,admin,admin
344,129794,3769,20017,3746,1,0,N,N,N,CP_Drtn,TT_Task,DT_FixedDUR2,RV_OK,TK_NotStart,H-6-500,Slab Pouring works,3779,736,0,8,0,7,7,8,0,0,0,,,,2012-09-28 08:00,2012-09-28 16:00,,2012-06-28 08:00,2012-06-28 16:00,2012-06-28 08:00,2012-06-28 16:00,2012-06-28 08:00,2012-06-28 16:00,,2012-09-28 08:00,2012-09-28 16:00,,PT_Normal,,,,,syYbsrJUmky5OnklwB79fA,v3XOYaKxRU2RLXTxEkl+fg,,,N,0,0,,,2012-05-05 12:17,2012-05-16 14:02,admin,admin
345,129795,3769,20036,3746,1,100,N,N,N,CP_Drtn,TT_Task,DT_FixedDUR2,RV_OK,TK_Complete,H-6-90,R.C footings Pouring works,3779,,,0,6,0,6,8,0,0,0,,2012-04-14 00:00,2012-04-15 00:00,,,,,,,,2012-05-21 08:00,2012-05-21 16:00,,,,,PT_Normal,,,,,+gADhJGX70aJkyoL5XTKGA,XsT38gA9BUuLuLLIL1B1PA,,,N,6,0,,,2012-05-05 12:17,2012-05-16 14:02,admin,admin
346,129796,3769,20036,3746,1,100,N,N,N,CP_Drtn,TT_Task,DT_FixedDUR2,RV_OK,TK_Complete,H-6-60,R.C footings steel works,3778,,,0,41,0,41,56,0,0,0,,2012-04-10 00:00,2012-04-13 00:00,,,,,,,,2012-05-06 08:00,2012-05-12 16:00,,,,,PT_Normal,,,,,UtiGiK1Dk0a9VE+zjlz2bA,YM+zIR85jkSOUX2kJkq1Zg,,,N,41,0,,,2012-05-05 12:17,2012-05-16 14:02,admin,admin
347,129797,3769,20003,3746,1,0,N,N,N,CP_Drtn,TT_Task,DT_FixedDUR2,RV_OK,TK_NotStart,H-7-40,R.C footings form work,3777,0,0,56,0,48,48,56,0,0,0,,,,2012-06-04 08:00,2012-06-10 16:00,,2012-06-04 08:00,2012-06-10 16:00,2012-06-04 08:00,2012-06-10 16:00,2012-06-04 08:00,2012-06-10 16:00,,2012-06-04 08:00,2012-06-10 16:00,,PT_Normal,,,,,qIrmdySFbUmuGVBxlW70Xg,pI5YX2z4R0G8sUa4oXL2sQ,,,Y,0,0,,,2012-05-05 12:17,2012-05-16 14:02,admin,admin
348,129798,3769,20004,3746,1,0,N,N,N,CP_Drtn,TT_Task,DT_FixedDUR2,RV_OK,TK_NotStart,H-7-100,Columns form works,3777,0,0,32,0,25,25,32,0,0,0,,,,2012-06-21 08:00,2012-06-24 16:00,,2012-06-21 08:00,2012-06-24 16:00,2012-06-21 08:00,2012-06-24 16:00,2012-06-21 08:00,2012-06-24 16:00,,2012-06-21 08:00,2012-06-24 16:00,,PT_Normal,,,,,oecq2GBpNEO6k0BGQ2YDow,ZNxJohhQ0kig/lH/L0DlNA,,,Y,0,0,,,2012-05-05 12:17,2012-05-16 14:02,admin,admin
349,129799,3769,20004,3746,1,0,N,N,N,CP_Drtn,TT_Task,DT_FixedDUR2,RV_OK,TK_NotStart,H-7-160,Slab form works,3777,0,0,120,0,67,67,120,0,0,0,,,,2012-07-01 08:00,2012-07-15 16:00,,2012-07-01 08:00,2012-07-15 16:00,2012-07-01 08:00,2012-07-15 16:00,2012-07-01 08:00,2012-07-15 16:00,,2012-07-01 08:00,2012-07-15 16:00,,PT_Normal,,,,,wyBv/3sTMEqzgFhYHsWZAA,+gwC3XvkS0Sgo6GLcekxqA,,,Y,0,0,,,2012-05-05 12:17,2012-05-16 14:02,admin,admin
350,129800,3769,20005,3746,1,0,N,N,N,CP_Drtn,TT_Task,DT_FixedDUR2,RV_OK,TK_NotStart,H-7-220,Columns form works,3777,0,0,32,0,15,15,32,0,0,0,,,,2012-07-23 08:00,2012-07-26 16:00,,2012-07-23 08:00,2012-07-26 16:00,2012-07-23 08:00,2012-07-26 16:00,2012-07-23 08:00,2012-07-26 16:00,,2012-07-23 08:00,2012-07-26 16:00,,PT_Normal,,,,,dBKtOWGXJE2I5VlXIyG9xg,yM6AWXiM8EeF4M6wL9YRBg,,,Y,0,0,,,2012-05-05 12:17,2012-05-16 14:02,admin,admin
351,129801,3769,20005,3746,1,0,N,N,N,CP_Drtn,TT_Task,DT_FixedDUR2,RV_OK,TK_NotStart,H-7-290,Slab form works,3777,0,0,120,0,67,67,120,0,0,0,,,,2012-08-02 08:00,2012-08-16 16:00,,2012-08-02 08:00,2012-08-16 16:00,2012-08-02 08:00,2012-08-16 16:00,2012-08-02 08:00,2012-08-16 16:00,,2012-08-02 08:00,2012-08-16 16:00,,PT_Normal,,,,,TgBF1a2xgkaCz4UI8niqTQ,eUmZ5ZkllU65T/nqcI1pdQ,,,Y,0,0,,,2012-05-05 12:17,2012-05-16 14:02,admin,admin
352,129802,3769,20006,3746,1,0,N,N,N,CP_Drtn,TT_Task,DT_FixedDUR2,RV_OK,TK_NotStart,H-7-380,Columns form works,3777,0,0,64,0,15,15,64,0,0,0,,,,2012-08-24 08:00,2012-08-31 16:00,,2012-08-24 08:00,2012-08-31 16:00,2012-08-24 08:00,2012-08-31 16:00,2012-08-24 08:00,2012-08-31 16:00,,2012-08-24 08:00,2012-08-31 16:00,,PT_Normal,,,,,RdGNhM8CxkuaMlfJZV6piQ,iWO+P2EnB0a/PHSeVSUlPA,,,Y,0,0,,,2012-05-05 12:17,2012-05-16 14:02,admin,admin
353,129803,3769,20006,3746,1,0,N,N,N,CP_Drtn,TT_Task,DT_FixedDUR2,RV_OK,TK_NotStart,H-7-450,Slab form works,3777,0,0,120,0,67,67,120,0,0,0,,,,2012-09-07 08:00,2012-09-21 16:00,,2012-09-07 08:00,2012-09-21 16:00,2012-09-07 08:00,2012-09-21 16:00,2012-09-07 08:00,2012-09-21 16:00,,2012-09-07 08:00,2012-09-21 16:00,,PT_Normal,,,,,wDzP9oU0IUivERSGsbIWcA,Oz+YL2zHMk+k+YZGY/Un2w,,,Y,0,0,,,2012-05-05 12:17,2012-05-16 14:02,admin,admin
354,129804,3769,19928,3746,1,0,N,N,N,CP_Drtn,TT_Task,DT_FixedDUR2,RV_OK,TK_NotStart,H-7-250,Footing insulation,3780,440,0,56,0,7,7,56,0,0,0,,,,2012-09-24 08:00,2012-09-30 16:00,,2012-07-31 08:00,2012-08-06 16:00,2012-07-31 08:00,2012-08-06 16:00,2012-07-31 08:00,2012-08-06 16:00,,2012-09-24 08:00,2012-09-30 16:00,,PT_Normal,,,,,wnGM3hPzP0Wi2QaskzcXDg,mt0MUnseVkiE5PyRXG/wQg,,,N,0,0,,,2012-05-05 12:17,2012-05-16 14:02,admin,admin
355,129805,3769,19928,3746,1,0,N,N,N,CP_Drtn,TT_Task,DT_FixedDUR2,RV_OK,TK_NotStart,H-7-510,Water proofing membrane,3780,0,0,56,0,33,33,56,0,0,0,,,,2012-09-29 08:00,2012-10-05 16:00,,2012-09-29 08:00,2012-10-05 16:00,2012-09-29 08:00,2012-10-05 16:00,2012-09-29 08:00,2012-10-05 16:00,,2012-09-29 08:00,2012-10-05 16:00,,PT_Normal,,,,,LNWBVWLv0UixU4kq/vqwjg,kbz1uXPQU0KVAg15ehHgQg,,,Y,0,0,,,2012-05-05 12:17,2012-05-16 14:02,admin,admin
356,129806,3769,19928,3746,1,0,N,N,N,CP_Drtn,TT_Task,DT_FixedDUR2,RV_OK,TK_NotStart,H-7-530,Heat insulation,3780,0,0,24,0,8,8,24,0,0,0,,,,2012-10-07 08:00,2012-10-09 16:00,,2012-10-07 08:00,2012-10-09 16:00,2012-10-07 08:00,2012-10-09 16:00,2012-10-07 08:00,2012-10-09 16:00,,2012-10-07 08:00,2012-10-09 16:00,,PT_Normal,,,,,iv3aVtsnsEudvIXna4a2tw,C1iHtNVbN0+F7KSL2eeqgg,,,Y,0,0,,,2012-05-05 12:17,2012-05-16 14:02,admin,admin
357,129807,3769,19981,3746,1,0,N,N,N,CP_Drtn,TT_Task,DT_FixedDUR2,RV_OK,TK_NotStart,H-7-10,P.C  footings formwork,3777,0,0,40,0,37,37,40,0,0,0,,,,2012-05-28 08:00,2012-06-01 16:00,,2012-05-28 08:00,2012-06-01 16:00,2012-05-28 08:00,2012-06-01 16:00,2012-05-28 08:00,2012-06-01 16:00,,2012-05-28 08:00,2012-06-01 16:00,,PT_Normal,,,,,HYabkaVOU0GWe/bGMF7XOw,QkJM3ZPVqEGwSmfvMqX1DQ,,,Y,0,0,,,2012-05-05 12:17,2012-05-16 14:02,admin,admin
358,129808,3769,19981,3746,1,0,N,N,N,CP_Drtn,TT_Task,DT_FixedDUR2,RV_OK,TK_NotStart,H-7-320,Slab on grade work,3777,440,0,40,0,12,12,40,0,0,0,,,,2012-10-09 08:00,2012-10-13 16:00,,2012-08-15 08:00,2012-08-19 16:00,2012-08-15 08:00,2012-08-19 16:00,2012-08-15 08:00,2012-08-19 16:00,,2012-10-09 08:00,2012-10-13 16:00,,PT_Normal,,,,,Khr6Cz+nWUaZe/ZGf7T1Jg,VZ2fPoqzH0aV/YokfJGCKA,,,N,0,0,,,2012-05-05 12:17,2012-05-16 14:02,admin,admin
359,129809,3769,19928,3746,1,0,N,N,N,CP_Drtn,TT_Task,DT_FixedDUR2,RV_OK,TK_NotStart,H-7-550,Slopped plain concrete,3779,0,0,24,0,8,8,24,0,0,0,,,,2012-10-11 08:00,2012-10-13 16:00,,2012-10-11 08:00,2012-10-13 16:00,2012-10-11 08:00,2012-10-13 16:00,2012-10-11 08:00,2012-10-13 16:00,,2012-10-11 08:00,2012-10-13 16:00,,PT_Normal,,,,,r+r/9sPEXkKMbw4UOgdx5A,32HKISWPeEefuKpoZggc7g,,,Y,0,0,,,2012-05-05 12:17,2012-05-16 14:02,admin,admin
360,129810,3769,20004,3746,1,0,N,N,N,CP_Drtn,TT_Task,DT_FixedDUR2,RV_OK,TK_NotStart,H-7-150,Columns Pouring works,3779,0,0,8,0,5,5,8,0,0,0,,,,2012-06-30 08:00,2012-06-30 16:00,,2012-06-30 08:00,2012-06-30 16:00,2012-06-30 08:00,2012-06-30 16:00,2012-06-30 08:00,2012-06-30 16:00,,2012-06-30 08:00,2012-06-30 16:00,,PT_Normal,,,,,zn7Pm6i1bk+6OIqOeWaGQQ,d/ckyV+g4UKXOgwhJQnHTw,,,Y,0,0,,,2012-05-05 12:17,2012-05-16 14:02,admin,admin
361,129811,3769,20004,3746,1,0,N,N,N,CP_Drtn,TT_Task,DT_FixedDUR2,RV_OK,TK_NotStart,H-7-120,Columns Steel works,3778,0,0,24,0,44,44,24,0,0,0,,,,2012-06-26 08:00,2012-06-28 16:00,,2012-06-26 08:00,2012-06-28 16:00,2012-06-26 08:00,2012-06-28 16:00,2012-06-26 08:00,2012-06-28 16:00,,2012-06-26 08:00,2012-06-28 16:00,,PT_Normal,,,,,qjswFcY9k0qILOJCv+EkSg,uPz+qTQKd02Fj4tAzvrhbA,,,Y,0,0,,,2012-05-05 12:17,2012-05-16 14:02,admin,admin
362,129812,3769,20005,3746,1,0,N,N,N,CP_Drtn,TT_Task,DT_FixedDUR2,RV_OK,TK_NotStart,H-7-280,Columns Pouring works,3779,0,0,8,0,3,3,8,0,0,0,,,,2012-08-01 08:00,2012-08-01 16:00,,2012-08-01 08:00,2012-08-01 16:00,2012-08-01 08:00,2012-08-01 16:00,2012-08-01 08:00,2012-08-01 16:00,,2012-08-01 08:00,2012-08-01 16:00,,PT_Normal,,,,,wTfzPCqXK0+VLUUHO27aYA,Pc5hcNIehkCeZBcH2atIQw,,,Y,0,0,,,2012-05-05 12:17,2012-05-16 14:02,admin,admin
363,129813,3769,20005,3746,1,0,N,N,N,CP_Drtn,TT_Task,DT_FixedDUR2,RV_OK,TK_NotStart,H-7-240,Columns Steel works,3778,0,0,24,0,26,26,24,0,0,0,,,,2012-07-28 08:00,2012-07-30 16:00,,2012-07-28 08:00,2012-07-30 16:00,2012-07-28 08:00,2012-07-30 16:00,2012-07-28 08:00,2012-07-30 16:00,,2012-07-28 08:00,2012-07-30 16:00,,PT_Normal,,,,,VOfqatgshU6Hoi/l9qpPHA,NBZOAeSUoEqQsGX27leNvg,,,Y,0,0,,,2012-05-05 12:17,2012-05-16 14:02,admin,admin
364,129814,3769,20006,3746,1,0,N,N,N,CP_Drtn,TT_Task,DT_FixedDUR2,RV_OK,TK_NotStart,H-7-440,Columns Pouring works,3779,0,0,8,0,3,3,8,0,0,0,,,,2012-09-06 08:00,2012-09-06 16:00,,2012-09-06 08:00,2012-09-06 16:00,2012-09-06 08:00,2012-09-06 16:00,2012-09-06 08:00,2012-09-06 16:00,,2012-09-06 08:00,2012-09-06 16:00,,PT_Normal,,,,,q4E9caSfUEiwSwrlbPc/Vw,rDyH+TIPqkeCTadjVud1Bg,,,Y,0,0,,,2012-05-05 12:17,2012-05-16 14:02,admin,admin
365,129815,3769,20006,3746,1,0,N,N,N,CP_Drtn,TT_Task,DT_FixedDUR2,RV_OK,TK_NotStart,H-7-410,Columns Steel works,3778,0,0,24,0,26,26,24,0,0,0,,,,2012-09-02 08:00,2012-09-04 16:00,,2012-09-02 08:00,2012-09-04 16:00,2012-09-02 08:00,2012-09-04 16:00,2012-09-02 08:00,2012-09-04 16:00,,2012-09-02 08:00,2012-09-04 16:00,,PT_Normal,,,,,cvnQrCuCNkKQiMPBbBmUxQ,0+bvzzEmR0WL5KNVKXS8tA,,,Y,0,0,,,2012-05-05 12:17,2012-05-16 14:02,admin,admin
366,129816,3769,20004,3746,1,0,N,N,N,CP_Drtn,TT_Task,DT_FixedDUR2,RV_OK,TK_NotStart,H-7-180,Slab steel works,3778,0,0,32,0,75,75,32,0,0,0,,,,2012-07-17 08:00,2012-07-20 16:00,,2012-07-17 08:00,2012-07-20 16:00,2012-07-17 08:00,2012-07-20 16:00,2012-07-17 08:00,2012-07-20 16:00,,2012-07-17 08:00,2012-07-20 16:00,,PT_Normal,,,,,vB6T7o2oQkSuLPZVFxo2kw,IrTGOfYwWU2jVKb8VeGwkw,,,Y,0,0,,,2012-05-05 12:17,2012-05-16 14:02,admin,admin
367,129817,3769,20004,3746,1,0,N,N,N,CP_Drtn,TT_Task,DT_FixedDUR2,RV_OK,TK_NotStart,H-7-210,Slab Pouring works,3779,0,0,8,0,7,7,8,0,0,0,,,,2012-07-22 08:00,2012-07-22 16:00,,2012-07-22 08:00,2012-07-22 16:00,2012-07-22 08:00,2012-07-22 16:00,2012-07-22 08:00,2012-07-22 16:00,,2012-07-22 08:00,2012-07-22 16:00,,PT_Normal,,,,,wgHw84Hhi0mN63PWsRsdsQ,skf+OFfbMUaZgqmDXZjpeg,,,Y,0,0,,,2012-05-05 12:17,2012-05-16 14:02,admin,admin
368,129818,3769,20005,3746,1,0,N,N,N,CP_Drtn,TT_Task,DT_FixedDUR2,RV_OK,TK_NotStart,H-7-330,Slab steel works,3778,0,0,32,0,75,75,32,0,0,0,,,,2012-08-18 08:00,2012-08-21 16:00,,2012-08-18 08:00,2012-08-21 16:00,2012-08-18 08:00,2012-08-21 16:00,2012-08-18 08:00,2012-08-21 16:00,,2012-08-18 08:00,2012-08-21 16:00,,PT_Normal,,,,,6r4JuGpAs0qvwF5R2l9ZQQ,nVm+OMWdtU+cNV/6iEVSTQ,,,Y,0,0,,,2012-05-05 12:17,2012-05-16 14:02,admin,admin
369,129819,3769,20005,3746,1,0,N,N,N,CP_Drtn,TT_Task,DT_FixedDUR2,RV_OK,TK_NotStart,H-7-360,Slab Pouring works,3779,0,0,8,0,7,7,8,0,0,0,,,,2012-08-23 08:00,2012-08-23 16:00,,2012-08-23 08:00,2012-08-23 16:00,2012-08-23 08:00,2012-08-23 16:00,2012-08-23 08:00,2012-08-23 16:00,,2012-08-23 08:00,2012-08-23 16:00,,PT_Normal,,,,,scV4cQXwdUuyEQmeUOpv3Q,lzLmH/i+a0yBQOSzcxFThA,,,Y,0,0,,,2012-05-05 12:17,2012-05-16 14:02,admin,admin
370,129820,3769,20006,3746,1,0,N,N,N,CP_Drtn,TT_Task,DT_FixedDUR2,RV_OK,TK_NotStart,H-7-470,Slab steel works,3778,0,0,32,0,75,75,32,0,0,0,,,,2012-09-23 08:00,2012-09-26 16:00,,2012-09-23 08:00,2012-09-26 16:00,2012-09-23 08:00,2012-09-26 16:00,2012-09-23 08:00,2012-09-26 16:00,,2012-09-23 08:00,2012-09-26 16:00,,PT_Normal,,,,,EOGscgsVb0yfcSZgn39KJQ,RclEthIV+keLPY0fAE7HhA,,,Y,0,0,,,2012-05-05 12:17,2012-05-16 14:02,admin,admin
371,129821,3769,20006,3746,1,0,N,N,N,CP_Drtn,TT_Task,DT_FixedDUR2,RV_OK,TK_NotStart,H-7-500,Slab Pouring works,3779,0,0,8,0,7,7,8,0,0,0,,,,2012-09-28 08:00,2012-09-28 16:00,,2012-09-28 08:00,2012-09-28 16:00,2012-09-28 08:00,2012-09-28 16:00,2012-09-28 08:00,2012-09-28 16:00,,2012-09-28 08:00,2012-09-28 16:00,,PT_Normal,,,,,i6Vrl3iA9k6GIwW5Uc3QTQ,v3XOYaKxRU2RLXTxEkl+fg,,,Y,0,0,,,2012-05-05 12:17,2012-05-16 14:02,admin,admin
372,129822,3769,20003,3746,1,0,N,N,N,CP_Drtn,TT_Task,DT_FixedDUR2,RV_OK,TK_NotStart,H-7-90,R.C footings Pouring works,3779,0,0,8,0,6,6,8,0,0,0,,,,2012-06-20 08:00,2012-06-20 16:00,,2012-06-20 08:00,2012-06-20 16:00,2012-06-20 08:00,2012-06-20 16:00,2012-06-20 08:00,2012-06-20 16:00,,2012-06-20 08:00,2012-06-20 16:00,,PT_Normal,,,,,AQw764zl9kWiN0nHUzvxsw,XsT38gA9BUuLuLLIL1B1PA,,,Y,0,0,,,2012-05-05 12:17,2012-05-16 14:02,admin,admin
373,129823,3769,20003,3746,1,0,N,N,N,CP_Drtn,TT_Task,DT_FixedDUR2,RV_OK,TK_NotStart,H-7-60,R.C footings steel works,3778,0,0,56,0,43,43,56,0,0,0,,,,2012-06-12 08:00,2012-06-18 16:00,,2012-06-12 08:00,2012-06-18 16:00,2012-06-12 08:00,2012-06-18 16:00,2012-06-12 08:00,2012-06-18 16:00,,2012-06-12 08:00,2012-06-18 16:00,,PT_Normal,,,,,CYvt3s0NOEGlFPM/aHUo9g,YM+zIR85jkSOUX2kJkq1Zg,,,Y,0,0,,,2012-05-05 12:17,2012-05-16 14:02,admin,admin
374,129824,3769,20011,3746,1,100,N,N,N,CP_Drtn,TT_Task,DT_FixedDUR2,RV_OK,TK_Complete,H-8-40,R.C footings form work,3777,,,0,29,0,29,56,0,0,0,,2012-04-04 00:00,2012-04-09 00:00,,,,,,,,2012-05-13 08:00,2012-05-19 16:00,,,,,PT_Normal,,,,,zsllIvY2r0e5xj8pnRXgAw,pI5YX2z4R0G8sUa4oXL2sQ,,,N,29,0,,,2012-05-05 12:17,2012-05-16 14:02,admin,admin
375,129825,3769,20012,3746,1,100,N,N,N,CP_Drtn,TT_Task,DT_FixedDUR2,RV_OK,TK_Complete,H-8-100,Columns form works,3777,,,0,23,0,23,32,0,0,0,,2012-04-16 00:00,2012-04-19 00:00,,,,,,,,2012-05-09 08:00,2012-05-12 16:00,,,,,PT_Normal,,,,,b4qc7UtzEEqmjcJJUQP6gQ,ZNxJohhQ0kig/lH/L0DlNA,,,N,23,0,,,2012-05-05 12:17,2012-05-16 14:02,admin,admin
376,129826,3769,20012,3746,1,100,N,N,N,CP_Drtn,TT_Task,DT_FixedDUR2,RV_OK,TK_Complete,H-8-160,Slab form works,3777,,,0,33,0,33,120,0,0,0,,2012-04-24 00:00,2012-04-29 00:00,,,,,,,,2012-05-19 08:00,2012-06-02 16:00,,,,,PT_Normal,,,,,K7+3txnb/0SL8iItZA1Ozw,+gwC3XvkS0Sgo6GLcekxqA,,,N,33,0,,,2012-05-05 12:17,2012-05-16 14:02,admin,admin
377,129827,3769,20013,3746,1,100,N,N,N,CP_Drtn,TT_Task,DT_FixedDUR2,RV_OK,TK_Complete,H-8-220,Columns form works,,,,0,0,0,0,32,0,0,0,,2012-05-05 00:00,2012-05-08 00:00,,,,,,,,2012-05-12 09:36,2012-05-16 09:36,,,,,PT_Normal,,,,,qXYt0BB8NESXLgP/zh1xrw,yM6AWXiM8EeF4M6wL9YRBg,,,N,0,0,,,2012-05-05 12:17,2012-05-16 14:02,admin,admin
378,129828,3769,20013,3746,1,0,N,N,N,CP_Drtn,TT_Task,DT_FixedDUR2,RV_OK,TK_Active,H-8-290,Slab form works,3777,684,0,60,16.5,16.5,33,120,0,0,0,,2012-05-13 00:00,,2012-08-09 12:00,2012-08-16 16:00,,2012-05-16 08:00,2012-05-23 12:00,2012-05-16 08:00,2012-05-23 12:00,2012-05-24 08:00,2012-06-07 16:00,,2012-08-09 12:00,2012-08-16 16:00,,PT_Normal,,,,,xg2rtZi6/0uwTyCerJLQ7A,eUmZ5ZkllU65T/nqcI1pdQ,,,N,16.5,0,,,2012-05-05 12:17,2012-05-16 14:02,admin,admin
379,129829,3769,20014,3746,1,0,N,N,N,CP_Drtn,TT_Task,DT_FixedDUR2,RV_OK,TK_NotStart,H-8-380,Columns form works,,684,0,64,0,0,0,64,0,0,0,,,,2012-08-24 08:00,2012-08-31 16:00,,2012-05-30 12:00,2012-06-07 12:00,2012-05-30 12:00,2012-06-07 12:00,2012-05-30 12:00,2012-06-07 12:00,,2012-08-24 08:00,2012-08-31 16:00,,PT_Normal,,,,,D9XdrCHgYkOgiecL1hOQ9g,iWO+P2EnB0a/PHSeVSUlPA,,,N,0,0,,,2012-05-05 12:17,2012-05-16 14:02,admin,admin
380,129830,3769,20014,3746,1,0,N,N,N,CP_Drtn,TT_Task,DT_FixedDUR2,RV_OK,TK_NotStart,H-8-450,Slab form works,3777,684,0,120,0,33,33,120,0,0,0,,,,2012-09-07 08:00,2012-09-21 16:00,,2012-06-13 12:00,2012-06-28 12:00,2012-06-13 12:00,2012-06-28 12:00,2012-06-13 12:00,2012-06-28 12:00,,2012-09-07 08:00,2012-09-21 16:00,,PT_Normal,,,,,6uzHB/j/h0qwVCFauPYuRA,Oz+YL2zHMk+k+YZGY/Un2w,,,N,0,0,,,2012-05-05 12:17,2012-05-16 14:02,admin,admin
381,129831,3769,19920,3746,1,0,N,N,N,CP_Drtn,TT_Task,DT_FixedDUR2,RV_OK,TK_NotStart,H-8-250,Footing insulation,3780,1048,0,56,0,4,4,56,0,0,0,,,,2012-09-24 08:00,2012-09-30 16:00,,2012-05-16 08:00,2012-05-22 16:00,2012-05-16 08:00,2012-05-22 16:00,2012-05-16 08:00,2012-05-22 16:00,,2012-09-24 08:00,2012-09-30 16:00,,PT_Normal,,,,,8gWAqh5fd0Sw0NJQL+gtjw,mt0MUnseVkiE5PyRXG/wQg,,,N,0,0,,,2012-05-05 12:17,2012-05-16 14:02,admin,admin
382,129832,3769,19920,3746,1,0,N,N,N,CP_Drtn,TT_Task,DT_FixedDUR2,RV_OK,TK_NotStart,H-8-510,Water proofing membrane,3780,684,0,56,0,26,26,56,0,0,0,,,,2012-09-29 08:00,2012-10-05 16:00,,2012-07-05 12:00,2012-07-12 12:00,2012-07-05 12:00,2012-07-12 12:00,2012-07-05 12:00,2012-07-12 12:00,,2012-09-29 08:00,2012-10-05 16:00,,PT_Normal,,,,,8z23gMPiYEyi9qDqOjfmgQ,kbz1uXPQU0KVAg15ehHgQg,,,N,0,0,,,2012-05-05 12:17,2012-05-16 14:02,admin,admin
383,129833,3769,19920,3746,1,0,N,N,N,CP_Drtn,TT_Task,DT_FixedDUR2,RV_OK,TK_NotStart,H-8-530,Heat insulation,3780,472,0,24,0,7,7,24,0,0,0,,,,2012-10-07 08:00,2012-10-09 16:00,,2012-08-09 08:00,2012-08-11 16:00,2012-08-09 08:00,2012-08-11 16:00,2012-08-09 08:00,2012-08-11 16:00,,2012-10-07 08:00,2012-10-09 16:00,,PT_Normal,,,,,iu3l9A2wwEWBIpIXlexOHg,C1iHtNVbN0+F7KSL2eeqgg,,,N,0,0,,,2012-05-05 12:17,2012-05-16 14:02,admin,admin
384,129834,3769,19971,3746,1,100,N,N,N,CP_Drtn,TT_Task,DT_FixedDUR2,RV_OK,TK_Complete,H-8-10,P.C  footings formwork,3777,,,0,15,0,15,40,0,0,0,,2012-03-29 00:00,2012-04-01 00:00,,,,,,,,2012-05-06 08:00,2012-05-10 16:00,,,,,PT_Normal,,,,,rWIKvzqYwkOMvgMx0CR4mQ,QkJM3ZPVqEGwSmfvMqX1DQ,,,N,15,0,,,2012-05-05 12:17,2012-05-16 14:02,admin,admin
385,129835,3769,19971,3746,1,0,N,N,N,CP_Drtn,TT_Task,DT_FixedDUR2,RV_OK,TK_NotStart,H-8-320,Slab on grade work,3777,1048,0,40,0,10,10,40,0,0,0,,,,2012-10-09 08:00,2012-10-13 16:00,,2012-05-31 08:00,2012-06-04 16:00,2012-05-31 08:00,2012-06-04 16:00,2012-05-31 08:00,2012-06-04 16:00,,2012-10-09 08:00,2012-10-13 16:00,,PT_Normal,,,,,yAaQS0l270iMB45jGBzHlQ,VZ2fPoqzH0aV/YokfJGCKA,,,N,0,0,,,2012-05-05 12:17,2012-05-16 14:02,admin,admin
386,129836,3769,19920,3746,1,0,N,N,N,CP_Drtn,TT_Task,DT_FixedDUR2,RV_OK,TK_NotStart,H-8-550,Slopped plain concrete,3779,472,0,24,0,7,7,24,0,0,0,,,,2012-10-11 08:00,2012-10-13 16:00,,2012-08-13 08:00,2012-08-15 16:00,2012-08-13 08:00,2012-08-15 16:00,2012-08-13 08:00,2012-08-15 16:00,,2012-10-11 08:00,2012-10-13 16:00,,PT_Normal,,,,,r6H9LQltiEabO7jqvvfudg,32HKISWPeEefuKpoZggc7g,,,N,0,0,,,2012-05-05 12:17,2012-05-16 14:02,admin,admin
387,129837,3769,20012,3746,1,100,N,N,N,CP_Drtn,TT_Task,DT_FixedDUR2,RV_OK,TK_Complete,H-8-150,Columns Pouring works,3779,,,0,5,0,5,8,0,0,0,,2012-04-22 00:00,2012-04-22 00:00,,,,,,,,2012-05-18 08:00,2012-05-18 16:00,,,,,PT_Normal,,,,,svkkbLFUQka/Qp+pLSz7vg,d/ckyV+g4UKXOgwhJQnHTw,,,N,5,0,,,2012-05-05 12:17,2012-05-16 14:02,admin,admin
388,129838,3769,20012,3746,1,100,N,N,N,CP_Drtn,TT_Task,DT_FixedDUR2,RV_OK,TK_Complete,H-8-120,Columns Steel works,3778,,,0,40,0,40,24,0,0,0,,2012-04-19 00:00,2012-04-21 00:00,,,,,,,,2012-05-14 08:00,2012-05-16 16:00,,,,,PT_Normal,,,,,o0vEH/top0qc3f95K/E7Fw,uPz+qTQKd02Fj4tAzvrhbA,,,N,40,0,,,2012-05-05 12:17,2012-05-16 14:02,admin,admin
389,129839,3769,20013,3746,1,100,N,N,N,CP_Drtn,TT_Task,DT_FixedDUR2,RV_OK,TK_Complete,H-8-280,Columns Pouring works,,,,0,0,0,0,8,0,0,0,,2012-05-12 00:00,2012-05-12 00:00,,,,,,,,2012-05-23 08:00,2012-05-23 16:00,,,,,PT_Normal,,,,,qhwR1al1VU+vrxyMWFdHzA,Pc5hcNIehkCeZBcH2atIQw,,,N,0,0,,,2012-05-05 12:17,2012-05-16 14:02,admin,admin
390,129840,3769,20013,3746,1,100,N,N,N,CP_Drtn,TT_Task,DT_FixedDUR2,RV_OK,TK_Complete,H-8-240,Columns Steel works,,,,0,0,0,0,24,0,0,0,,2012-05-09 00:00,2012-05-11 00:00,,,,,,,,2012-05-17 09:36,2012-05-20 09:36,,,,,PT_Normal,,,,,mAc3UdDUtU2UqbCWxejPIw,NBZOAeSUoEqQsGX27leNvg,,,N,0,0,,,2012-05-05 12:17,2012-05-16 14:02,admin,admin
391,129841,3769,20014,3746,1,0,N,N,N,CP_Drtn,TT_Task,DT_FixedDUR2,RV_OK,TK_NotStart,H-8-440,Columns Pouring works,,684,0,8,0,0,0,8,0,0,0,,,,2012-09-06 08:00,2012-09-06 16:00,,2012-06-12 12:00,2012-06-13 12:00,2012-06-12 12:00,2012-06-13 12:00,2012-06-12 12:00,2012-06-13 12:00,,2012-09-06 08:00,2012-09-06 16:00,,PT_Normal,,,,,n1/Kaxb5DU2QyrUxosoLEw,rDyH+TIPqkeCTadjVud1Bg,,,N,0,0,,,2012-05-05 12:17,2012-05-16 14:02,admin,admin
392,129842,3769,20014,3746,1,0,N,N,N,CP_Drtn,TT_Task,DT_FixedDUR2,RV_OK,TK_NotStart,H-8-410,Columns Steel works,,684,0,24,0,0,0,24,0,0,0,,,,2012-09-02 08:00,2012-09-04 16:00,,2012-06-08 12:00,2012-06-11 12:00,2012-06-08 12:00,2012-06-11 12:00,2012-06-08 12:00,2012-06-11 12:00,,2012-09-02 08:00,2012-09-04 16:00,,PT_Normal,,,,,T2tNHGU6sEmb6g+BUplV4g,0+bvzzEmR0WL5KNVKXS8tA,,,N,0,0,,,2012-05-05 12:17,2012-05-16 14:02,admin,admin
393,129843,3769,20012,3746,1,100,N,N,N,CP_Drtn,TT_Task,DT_FixedDUR2,RV_OK,TK_Complete,H-8-180,Slab steel works,3778,,,0,37,0,37,32,0,0,0,,2012-04-29 00:00,2012-05-02 00:00,,,,,,,,2012-06-04 08:00,2012-06-07 16:00,,,,,PT_Normal,,,,,SiZ29B0/nkaME2poq8qLQg,IrTGOfYwWU2jVKb8VeGwkw,,,N,37,0,,,2012-05-05 12:17,2012-05-16 14:02,admin,admin
394,129844,3769,20012,3746,1,100,N,N,N,CP_Drtn,TT_Task,DT_FixedDUR2,RV_OK,TK_Complete,H-8-210,Slab Pouring works,3779,,,0,3,0,3,8,0,0,0,,2012-05-03 00:00,2012-05-05 00:00,,,,,,,,2012-05-10 11:12,2012-05-11 11:12,,,,,PT_Normal,,,,,aQhEUivQgk66ZJ6NUUCTBA,skf+OFfbMUaZgqmDXZjpeg,,,N,3,0,,,2012-05-05 12:17,2012-05-16 14:02,admin,admin
395,129845,3769,20013,3746,1,0,N,N,N,CP_Drtn,TT_Task,DT_FixedDUR2,RV_OK,TK_NotStart,H-8-330,Slab steel works,3778,684,0,32,0,37,37,32,0,0,0,,,,2012-08-18 08:00,2012-08-21 16:00,,2012-05-24 12:00,2012-05-28 12:00,2012-05-24 12:00,2012-05-28 12:00,2012-05-24 12:00,2012-05-28 12:00,,2012-08-18 08:00,2012-08-21 16:00,,PT_Normal,,,,,6EteIrzLaUqqAnt4s/RvUg,nVm+OMWdtU+cNV/6iEVSTQ,,,N,0,0,,,2012-05-05 12:17,2012-05-16 14:02,admin,admin
396,129846,3769,20013,3746,1,0,N,N,N,CP_Drtn,TT_Task,DT_FixedDUR2,RV_OK,TK_NotStart,H-8-360,Slab Pouring works,3779,684,0,8,0,3,3,8,0,0,0,,,,2012-08-23 08:00,2012-08-23 16:00,,2012-05-29 12:00,2012-05-30 12:00,2012-05-29 12:00,2012-05-30 12:00,2012-05-29 12:00,2012-05-30 12:00,,2012-08-23 08:00,2012-08-23 16:00,,PT_Normal,,,,,BgLUJNZg1EW3wSsjTPbhNg,lzLmH/i+a0yBQOSzcxFThA,,,N,0,0,,,2012-05-05 12:17,2012-05-16 14:02,admin,admin
397,129847,3769,20014,3746,1,0,N,N,N,CP_Drtn,TT_Task,DT_FixedDUR2,RV_OK,TK_NotStart,H-8-470,Slab steel works,3778,684,0,32,0,37,37,32,0,0,0,,,,2012-09-23 08:00,2012-09-26 16:00,,2012-06-29 12:00,2012-07-03 12:00,2012-06-29 12:00,2012-07-03 12:00,2012-06-29 12:00,2012-07-03 12:00,,2012-09-23 08:00,2012-09-26 16:00,,PT_Normal,,,,,JrkKfmI9KUe4tiDv5f1O1w,RclEthIV+keLPY0fAE7HhA,,,N,0,0,,,2012-05-05 12:17,2012-05-16 14:02,admin,admin
398,129848,3769,20014,3746,1,0,N,N,N,CP_Drtn,TT_Task,DT_FixedDUR2,RV_OK,TK_NotStart,H-8-500,Slab Pouring works,3779,684,0,8,0,3,3,8,0,0,0,,,,2012-09-28 08:00,2012-09-28 16:00,,2012-07-04 12:00,2012-07-05 12:00,2012-07-04 12:00,2012-07-05 12:00,2012-07-04 12:00,2012-07-05 12:00,,2012-09-28 08:00,2012-09-28 16:00,,PT_Normal,,,,,fzYyHhZ0gEKBStJXhkrbOw,v3XOYaKxRU2RLXTxEkl+fg,,,N,0,0,,,2012-05-05 12:17,2012-05-16 14:02,admin,admin
399,129849,3769,20011,3746,1,100,N,N,N,CP_Drtn,TT_Task,DT_FixedDUR2,RV_OK,TK_Complete,H-8-90,R.C footings Pouring works,3779,,,0,4,0,4,8,0,0,0,,2012-04-14 00:00,2012-04-14 00:00,,,,,,,,2012-05-29 08:00,2012-05-29 16:00,,,,,PT_Normal,,,,,RA3vgcdG8E6JqEcy81joPg,XsT38gA9BUuLuLLIL1B1PA,,,N,4,0,,,2012-05-05 12:17,2012-05-16 14:02,admin,admin
400,129850,3769,20011,3746,1,100,N,N,N,CP_Drtn,TT_Task,DT_FixedDUR2,RV_OK,TK_Complete,H-8-60,R.C footings steel works,3778,,,0,26,0,26,56,0,0,0,,2012-04-10 00:00,2012-04-13 00:00,,,,,,,,2012-05-21 08:00,2012-05-27 16:00,,,,,PT_Normal,,,,,uZck5BSWjEyvkFUYZa27DA,YM+zIR85jkSOUX2kJkq1Zg,,,N,26,0,,,2012-05-05 12:17,2012-05-16 14:02,admin,admin
401,129851,3769,20019,3746,1,100,N,N,N,CP_Drtn,TT_Task,DT_FixedDUR2,RV_OK,TK_Complete,H-9-40,R.C footings form work,3777,,,0,100,0,100,56,0,0,0,,2012-04-04 00:00,2012-04-09 00:00,,,,,,,,2012-05-13 08:00,2012-05-19 16:00,,,,,PT_Normal,,,,,LtMMvnf5RUOs+1mufAJSHg,pI5YX2z4R0G8sUa4oXL2sQ,,,N,100,0,,,2012-05-05 12:17,2012-05-16 14:02,admin,admin
402,129852,3769,20020,3746,1,100,N,N,N,CP_Drtn,TT_Task,DT_FixedDUR2,RV_OK,TK_Complete,H-9-100,Columns form works,3777,,,0,35,0,35,32,0,0,0,,2012-04-17 00:00,2012-04-21 00:00,,,,,,,,2012-05-07 08:00,2012-05-10 16:00,,,,,PT_Normal,,,,,/RIGDZQcJEe0tSg3zb+Y0w,ZNxJohhQ0kig/lH/L0DlNA,,,N,35,0,,,2012-05-05 12:17,2012-05-16 14:02,admin,admin
403,129853,3769,20020,3746,1,100,N,N,N,CP_Drtn,TT_Task,DT_FixedDUR2,RV_OK,TK_Complete,H-9-160,Slab form works,3777,,,0,150,0,150,120,0,0,0,,2012-04-25 00:00,2012-05-05 00:00,,,,,,,,2012-05-17 08:00,2012-05-31 16:00,,,,,PT_Normal,,,,,IOIYSzWm4EaGvI6Tn2c2Wg,+gwC3XvkS0Sgo6GLcekxqA,,,N,150,0,,,2012-05-05 12:17,2012-05-16 14:02,admin,admin
404,129854,3769,20021,3746,1,100,N,N,N,CP_Drtn,TT_Task,DT_FixedDUR2,RV_OK,TK_Complete,H-9-220,Columns form works,3777,,,0,20,0,20,32,0,0,0,,2012-05-11 00:00,2012-05-13 00:00,,,,,,,,2012-05-23 08:00,2012-05-26 16:00,,,,,PT_Normal,,,,,VN9861aVkki7EtEFZ9A5hw,yM6AWXiM8EeF4M6wL9YRBg,,,N,20,0,,,2012-05-05 12:17,2012-05-16 14:02,admin,admin
405,129855,3769,20021,3746,1,0,N,N,N,CP_Drtn,TT_Task,DT_FixedDUR2,RV_OK,TK_NotStart,H-9-290,Slab form works,3777,560,0,120,0,150,150,120,0,0,0,,,,2012-08-02 08:00,2012-08-16 16:00,,2012-05-24 08:00,2012-06-07 16:00,2012-05-24 08:00,2012-06-07 16:00,2012-05-24 08:00,2012-06-07 16:00,,2012-08-02 08:00,2012-08-16 16:00,,PT_Normal,,,,,krJV7Bp0SUKAEZXFhwew4g,eUmZ5ZkllU65T/nqcI1pdQ,,,N,0,0,,,2012-05-05 12:17,2012-05-16 14:02,admin,admin
406,129856,3769,20022,3746,1,0,N,N,N,CP_Drtn,TT_Task,DT_FixedDUR2,RV_OK,TK_NotStart,H-9-380,Columns form works,3777,560,0,64,0,20,20,64,0,0,0,,,,2012-08-24 08:00,2012-08-31 16:00,,2012-06-15 08:00,2012-06-22 16:00,2012-06-15 08:00,2012-06-22 16:00,2012-06-15 08:00,2012-06-22 16:00,,2012-08-24 08:00,2012-08-31 16:00,,PT_Normal,,,,,0aJViZWmrUiG89tMFkABPg,iWO+P2EnB0a/PHSeVSUlPA,,,N,0,0,,,2012-05-05 12:17,2012-05-16 14:02,admin,admin
407,129857,3769,20022,3746,1,0,N,N,N,CP_Drtn,TT_Task,DT_FixedDUR2,RV_OK,TK_NotStart,H-9-450,Slab form works,3777,560,0,120,0,150,150,120,0,0,0,,,,2012-09-07 08:00,2012-09-21 16:00,,2012-06-29 08:00,2012-07-13 16:00,2012-06-29 08:00,2012-07-13 16:00,2012-06-29 08:00,2012-07-13 16:00,,2012-09-07 08:00,2012-09-21 16:00,,PT_Normal,,,,,ZOIGo+Sor02NGss2mCYUuQ,Oz+YL2zHMk+k+YZGY/Un2w,,,N,0,0,,,2012-05-05 12:17,2012-05-16 14:02,admin,admin
408,129858,3769,19960,3746,1,0,N,N,N,CP_Drtn,TT_Task,DT_FixedDUR2,RV_OK,TK_NotStart,H-9-250,Footing insulation,3780,1016,0,56,0,14,14,56,0,0,0,,,,2012-09-24 08:00,2012-09-30 16:00,,2012-05-20 08:00,2012-05-26 16:00,2012-05-20 08:00,2012-05-26 16:00,2012-05-20 08:00,2012-05-26 16:00,,2012-09-24 08:00,2012-09-30 16:00,,PT_Normal,,,,,x2M9EFdfA0aGwVchIjwgqg,mt0MUnseVkiE5PyRXG/wQg,,,N,0,0,,,2012-05-05 12:17,2012-05-16 14:02,admin,admin
409,129859,3769,19960,3746,1,0,N,N,N,CP_Drtn,TT_Task,DT_FixedDUR2,RV_OK,TK_NotStart,H-9-510,Water proofing membrane,3780,560,0,56,0,51,51,56,0,0,0,,,,2012-09-29 08:00,2012-10-05 16:00,,2012-07-21 08:00,2012-07-27 16:00,2012-07-21 08:00,2012-07-27 16:00,2012-07-21 08:00,2012-07-27 16:00,,2012-09-29 08:00,2012-10-05 16:00,,PT_Normal,,,,,GVOD9mFk40aUKdgW4yZbwA,kbz1uXPQU0KVAg15ehHgQg,,,N,0,0,,,2012-05-05 12:17,2012-05-16 14:02,admin,admin
410,129860,3769,19960,3746,1,0,N,N,N,CP_Drtn,TT_Task,DT_FixedDUR2,RV_OK,TK_NotStart,H-9-530,Heat insulation,3780,472,0,24,0,13,13,24,0,0,0,,,,2012-10-07 08:00,2012-10-09 16:00,,2012-08-09 08:00,2012-08-11 16:00,2012-08-09 08:00,2012-08-11 16:00,2012-08-09 08:00,2012-08-11 16:00,,2012-10-07 08:00,2012-10-09 16:00,,PT_Normal,,,,,7AVPGsniK0aCOS89cl7E9g,C1iHtNVbN0+F7KSL2eeqgg,,,N,0,0,,,2012-05-05 12:17,2012-05-16 14:02,admin,admin
411,129861,3769,19979,3746,1,100,N,N,N,CP_Drtn,TT_Task,DT_FixedDUR2,RV_OK,TK_Complete,H-9-10,P.C  footings formwork,3777,,,0,76,0,76,40,0,0,0,,2012-03-29 00:00,2012-04-01 00:00,,,,,,,,2012-05-06 08:00,2012-05-10 16:00,,,,,PT_Normal,,,,,FCeAUxPQHUa6y5+IQSK3/A,QkJM3ZPVqEGwSmfvMqX1DQ,,,N,76,0,,,2012-05-05 12:17,2012-05-16 14:02,admin,admin
412,129862,3769,19979,3746,1,0,N,N,N,CP_Drtn,TT_Task,DT_FixedDUR2,RV_OK,TK_NotStart,H-9-320,Slab on grade work,3779,1016,0,40,0,19,19,40,0,0,0,,,,2012-10-09 08:00,2012-10-13 16:00,,2012-06-04 08:00,2012-06-08 16:00,2012-06-04 08:00,2012-06-08 16:00,2012-06-04 08:00,2012-06-08 16:00,,2012-10-09 08:00,2012-10-13 16:00,,PT_Normal,,,,,fl/ipoIdjUe1lYC7gHMymw,VZ2fPoqzH0aV/YokfJGCKA,,,N,0,0,,,2012-05-05 12:17,2012-05-16 14:02,admin,admin
413,129863,3769,19960,3746,1,0,N,N,N,CP_Drtn,TT_Task,DT_FixedDUR2,RV_OK,TK_NotStart,H-9-550,Slopped plain concrete,3779,472,0,24,0,13,13,24,0,0,0,,,,2012-10-11 08:00,2012-10-13 16:00,,2012-08-13 08:00,2012-08-15 16:00,2012-08-13 08:00,2012-08-15 16:00,2012-08-13 08:00,2012-08-15 16:00,,2012-10-11 08:00,2012-10-13 16:00,,PT_Normal,,,,,OtgE9EzBmEW9FtsUnXDW8g,32HKISWPeEefuKpoZggc7g,,,N,0,0,,,2012-05-05 12:17,2012-05-16 14:02,admin,admin
414,129864,3769,20020,3746,1,100,N,N,N,CP_Drtn,TT_Task,DT_FixedDUR2,RV_OK,TK_Complete,H-9-150,Columns Pouring works,3779,,,0,7,0,7,8,0,0,0,,2012-04-24 00:00,2012-04-24 00:00,,,,,,,,2012-05-16 08:00,2012-05-16 16:00,,,,,PT_Normal,,,,,LWsNPrt0e0eqtIRbLXNfCg,d/ckyV+g4UKXOgwhJQnHTw,,,N,7,0,,,2012-05-05 12:17,2012-05-16 14:02,admin,admin
415,129865,3769,20020,3746,1,100,N,N,N,CP_Drtn,TT_Task,DT_FixedDUR2,RV_OK,TK_Complete,H-9-120,Columns Steel works,3778,,,0,62,0,62,24,0,0,0,,2012-04-21 00:00,2012-04-24 00:00,,,,,,,,2012-05-12 08:00,2012-05-14 16:00,,,,,PT_Normal,,,,,XbFoMzEMX0SplBHoZHKdCA,uPz+qTQKd02Fj4tAzvrhbA,,,N,62,0,,,2012-05-05 12:17,2012-05-16 14:02,admin,admin
416,129866,3769,20021,3746,1,0,N,N,N,CP_Drtn,TT_Task,DT_FixedDUR2,RV_OK,TK_NotStart,H-9-280,Columns Pouring works,3779,608,48,8,0,4,4,8,0,0,0,,,,2012-08-01 08:00,2012-08-01 16:00,,2012-05-17 08:00,2012-05-17 16:00,2012-05-17 08:00,2012-05-17 16:00,2012-05-17 08:00,2012-05-17 16:00,,2012-08-01 08:00,2012-08-01 16:00,,PT_Normal,,,,,gyQvsdINhEmTVRvgiHDqkw,Pc5hcNIehkCeZBcH2atIQw,,,N,0,0,,,2012-05-05 12:17,2012-05-16 14:02,admin,admin
417,129867,3769,20021,3746,1,100,N,N,N,CP_Drtn,TT_Task,DT_FixedDUR2,RV_OK,TK_Complete,H-9-240,Columns Steel works,3778,,,0,35,0,35,24,0,0,0,,2012-05-13 00:00,2012-05-15 00:00,,,,,,,,2012-05-28 08:00,2012-05-30 16:00,,,,,PT_Normal,,,,,YUzNWd8oAESsM9zdxgv0aA,NBZOAeSUoEqQsGX27leNvg,,,N,35,0,,,2012-05-05 12:17,2012-05-16 14:02,admin,admin
418,129868,3769,20022,3746,1,0,N,N,N,CP_Drtn,TT_Task,DT_FixedDUR2,RV_OK,TK_NotStart,H-9-440,Columns Pouring works,3779,560,0,8,0,4,4,8,0,0,0,,,,2012-09-06 08:00,2012-09-06 16:00,,2012-06-28 08:00,2012-06-28 16:00,2012-06-28 08:00,2012-06-28 16:00,2012-06-28 08:00,2012-06-28 16:00,,2012-09-06 08:00,2012-09-06 16:00,,PT_Normal,,,,,AGfbCNqeZEaweqvhBA9rRQ,rDyH+TIPqkeCTadjVud1Bg,,,N,0,0,,,2012-05-05 12:17,2012-05-16 14:02,admin,admin
419,129869,3769,20022,3746,1,0,N,N,N,CP_Drtn,TT_Task,DT_FixedDUR2,RV_OK,TK_NotStart,H-9-410,Columns Steel works,3778,560,0,24,0,35,35,24,0,0,0,,,,2012-09-02 08:00,2012-09-04 16:00,,2012-06-24 08:00,2012-06-26 16:00,2012-06-24 08:00,2012-06-26 16:00,2012-06-24 08:00,2012-06-26 16:00,,2012-09-02 08:00,2012-09-04 16:00,,PT_Normal,,,,,vFaWMaKcKEq+ca1TecNqxw,0+bvzzEmR0WL5KNVKXS8tA,,,N,0,0,,,2012-05-05 12:17,2012-05-16 14:02,admin,admin
420,129870,3769,20020,3746,1,100,N,N,N,CP_Drtn,TT_Task,DT_FixedDUR2,RV_OK,TK_Complete,H-9-180,Slab steel works,3778,,,0,168,0,168,32,0,0,0,,2012-04-30 00:00,2012-05-12 00:00,,,,,,,,2012-06-02 08:00,2012-06-05 16:00,,,,,PT_Normal,,,,,jV5cYjfQnkWhDFsxw3D2MQ,IrTGOfYwWU2jVKb8VeGwkw,,,N,168,0,,,2012-05-05 12:17,2012-05-16 14:02,admin,admin
421,129871,3769,20020,3746,1,100,N,N,N,CP_Drtn,TT_Task,DT_FixedDUR2,RV_OK,TK_Complete,H-9-210,Slab Pouring works,3779,,,0,15,0,15,8,0,0,0,,2012-05-03 00:00,2012-05-12 00:00,,,,,,,,2012-06-07 08:00,2012-06-07 16:00,,,,,PT_Normal,,,,,tmB5xvE8GESfVGdmKmxeiA,skf+OFfbMUaZgqmDXZjpeg,,,N,15,0,,,2012-05-05 12:17,2012-05-16 14:02,admin,admin
422,129872,3769,20021,3746,1,0,N,N,N,CP_Drtn,TT_Task,DT_FixedDUR2,RV_OK,TK_NotStart,H-9-330,Slab steel works,3778,560,0,32,0,168,168,32,0,0,0,,,,2012-08-18 08:00,2012-08-21 16:00,,2012-06-09 08:00,2012-06-12 16:00,2012-06-09 08:00,2012-06-12 16:00,2012-06-09 08:00,2012-06-12 16:00,,2012-08-18 08:00,2012-08-21 16:00,,PT_Normal,,,,,GSzghP6c6Eme1oG2zg16IA,nVm+OMWdtU+cNV/6iEVSTQ,,,N,0,0,,,2012-05-05 12:17,2012-05-16 14:02,admin,admin
423,129873,3769,20021,3746,1,0,N,N,N,CP_Drtn,TT_Task,DT_FixedDUR2,RV_OK,TK_NotStart,H-9-360,Slab Pouring works,3779,560,0,8,0,15,15,8,0,0,0,,,,2012-08-23 08:00,2012-08-23 16:00,,2012-06-14 08:00,2012-06-14 16:00,2012-06-14 08:00,2012-06-14 16:00,2012-06-14 08:00,2012-06-14 16:00,,2012-08-23 08:00,2012-08-23 16:00,,PT_Normal,,,,,Asa03g1z4EmjjDjjJFegow,lzLmH/i+a0yBQOSzcxFThA,,,N,0,0,,,2012-05-05 12:17,2012-05-16 14:02,admin,admin
424,129874,3769,20022,3746,1,0,N,N,N,CP_Drtn,TT_Task,DT_FixedDUR2,RV_OK,TK_NotStart,H-9-470,Slab steel works,3778,560,0,32,0,168,168,32,0,0,0,,,,2012-09-23 08:00,2012-09-26 16:00,,2012-07-15 08:00,2012-07-18 16:00,2012-07-15 08:00,2012-07-18 16:00,2012-07-15 08:00,2012-07-18 16:00,,2012-09-23 08:00,2012-09-26 16:00,,PT_Normal,,,,,QFbcbtiBOkG0vxPk7G5gsA,RclEthIV+keLPY0fAE7HhA,,,N,0,0,,,2012-05-05 12:17,2012-05-16 14:02,admin,admin
425,129875,3769,20022,3746,1,0,N,N,N,CP_Drtn,TT_Task,DT_FixedDUR2,RV_OK,TK_NotStart,H-9-500,Slab Pouring works,3779,560,0,8,0,15,15,8,0,0,0,,,,2012-09-28 08:00,2012-09-28 16:00,,2012-07-20 08:00,2012-07-20 16:00,2012-07-20 08:00,2012-07-20 16:00,2012-07-20 08:00,2012-07-20 16:00,,2012-09-28 08:00,2012-09-28 16:00,,PT_Normal,,,,,bxGz80zXm0O8JZLcHMn73Q,v3XOYaKxRU2RLXTxEkl+fg,,,N,0,0,,,2012-05-05 12:17,2012-05-16 14:02,admin,admin
426,129876,3769,20019,3746,1,100,N,N,N,CP_Drtn,TT_Task,DT_FixedDUR2,RV_OK,TK_Complete,H-9-90,R.C footings Pouring works,3779,,,0,13,0,13,8,0,0,0,,2012-04-14 00:00,2012-04-16 00:00,,,,,,,,2012-05-29 08:00,2012-05-29 16:00,,,,,PT_Normal,,,,,DgH4UCcYW0+SjlwlSkT0AQ,XsT38gA9BUuLuLLIL1B1PA,,,N,13,0,,,2012-05-05 12:17,2012-05-16 14:02,admin,admin
427,129877,3769,20019,3746,1,100,N,N,N,CP_Drtn,TT_Task,DT_FixedDUR2,RV_OK,TK_Complete,H-9-60,R.C footings steel works,3778,,,0,90,0,90,56,0,0,0,,2012-04-10 00:00,2012-04-13 00:00,,,,,,,,2012-05-21 08:00,2012-05-27 16:00,,,,,PT_Normal,,,,,O42AyGWt102NGuZ6it6btQ,YM+zIR85jkSOUX2kJkq1Zg,,,N,90,0,,,2012-05-05 12:17,2012-05-16 14:02,admin,admin
428,129878,3769,19989,3746,1,100,N,N,N,CP_Drtn,TT_Task,DT_FixedDUR2,RV_OK,TK_Complete,H-10-40,R.C footings form work,3777,,,0,84,0,84,56,0,0,0,,2012-04-06 00:00,2012-04-11 00:00,,,,,,,,2012-04-29 08:00,2012-05-05 16:00,,,,,PT_Normal,,,,,rXtvCQ58SkuEhpBWl09QpQ,pI5YX2z4R0G8sUa4oXL2sQ,,,N,84,0,,,2012-05-05 12:17,2012-05-16 14:02,admin,admin
429,129879,3769,20028,3746,1,100,N,N,N,CP_Drtn,TT_Task,DT_FixedDUR2,RV_OK,TK_Complete,H-10-100,Columns form works,3777,,,0,40,0,40,32,0,0,0,,2012-04-17 00:00,2012-04-20 00:00,,,,,,,,2012-05-06 08:00,2012-05-09 16:00,,,,,PT_Normal,,,,,060aFUAZRU2PopP+ly449g,ZNxJohhQ0kig/lH/L0DlNA,,,N,40,0,,,2012-05-05 12:17,2012-05-16 14:02,admin,admin
430,129880,3769,20028,3746,1,100,N,N,N,CP_Drtn,TT_Task,DT_FixedDUR2,RV_OK,TK_Complete,H-10-160,Slab form works,3777,,,0,117,0,117,120,0,0,0,,2012-04-24 00:00,2012-04-29 00:00,,,,,,,,2012-05-07 08:00,2012-05-21 16:00,,,,,PT_Normal,,,,,W++/ZB76KkSnlQD8twrnKg,+gwC3XvkS0Sgo6GLcekxqA,,,N,117,0,,,2012-05-05 12:17,2012-05-16 14:02,admin,admin
431,129881,3769,20029,3746,1,100,N,N,N,CP_Drtn,TT_Task,DT_FixedDUR2,RV_OK,TK_Complete,H-10-220,Columns form works,3777,,,0,23,0,23,32,0,0,0,,2012-05-01 00:00,2012-05-04 00:00,,,,,,,,2012-05-29 08:00,2012-06-01 16:00,,,,,PT_Normal,,,,,ZPi6nkl6wESCOsqetIuH1g,yM6AWXiM8EeF4M6wL9YRBg,,,N,23,0,,,2012-05-05 12:17,2012-05-16 14:02,admin,admin
432,129882,3769,20029,3746,1,100,N,N,N,CP_Drtn,TT_Task,DT_FixedDUR2,RV_OK,TK_Complete,H-10-290,Slab form works,3777,,,0,117,0,117,120,0,0,0,,2012-05-08 00:00,2012-05-11 00:00,,,,,,,,2012-05-19 12:48,2012-06-03 12:48,,,,,PT_Normal,,,,,h38vjl6u+Uis+RbMqNfsxQ,eUmZ5ZkllU65T/nqcI1pdQ,,,N,117,0,,,2012-05-05 12:17,2012-05-16 14:02,admin,admin
433,129883,3769,20030,3746,1,0,N,N,N,CP_Drtn,TT_Task,DT_FixedDUR2,RV_OK,TK_NotStart,H-10-390,Columns form works,3777,736,0,64,0,23,23,64,0,0,0,,,,2012-08-24 08:00,2012-08-31 16:00,,2012-05-24 08:00,2012-05-31 16:00,2012-05-24 08:00,2012-05-31 16:00,2012-05-24 08:00,2012-05-31 16:00,,2012-08-24 08:00,2012-08-31 16:00,,PT_Normal,,,,,7SO/pSGpQUCn6JilnRGVDQ,iWO+P2EnB0a/PHSeVSUlPA,,,N,0,0,,,2012-05-05 12:17,2012-05-16 14:02,admin,admin
434,129884,3769,20030,3746,1,0,N,N,N,CP_Drtn,TT_Task,DT_FixedDUR2,RV_OK,TK_NotStart,H-10-450,Slab form works,3777,736,0,120,0,117,117,120,0,0,0,,,,2012-09-07 08:00,2012-09-21 16:00,,2012-06-07 08:00,2012-06-21 16:00,2012-06-07 08:00,2012-06-21 16:00,2012-06-07 08:00,2012-06-21 16:00,,2012-09-07 08:00,2012-09-21 16:00,,PT_Normal,,,,,JsQzHU0ypE6MY/1hZSd1DQ,Oz+YL2zHMk+k+YZGY/Un2w,,,N,0,0,,,2012-05-05 12:17,2012-05-16 14:02,admin,admin
435,129885,3769,19951,3746,1,0,N,N,N,CP_Drtn,TT_Task,DT_FixedDUR2,RV_OK,TK_NotStart,H-10-250,Footing insulation,3780,1104,0,56,0,12,12,56,0,0,0,,,,2012-10-01 08:00,2012-10-07 16:00,,2012-05-16 08:00,2012-05-22 16:00,2012-05-16 08:00,2012-05-22 16:00,2012-05-16 08:00,2012-05-22 16:00,,2012-10-01 08:00,2012-10-07 16:00,,PT_Normal,,,,,WKRNBp+1OEyusTuMP4dzVw,mt0MUnseVkiE5PyRXG/wQg,,,N,0,0,,,2012-05-05 12:17,2012-05-16 14:02,admin,admin
436,129886,3769,19951,3746,1,0,N,N,N,CP_Drtn,TT_Task,DT_FixedDUR2,RV_OK,TK_NotStart,H-10-510,Water proofing membrane,3780,736,0,56,0,56,56,56,0,0,0,,,,2012-09-29 08:00,2012-10-05 16:00,,2012-06-29 08:00,2012-07-05 16:00,2012-06-29 08:00,2012-07-05 16:00,2012-06-29 08:00,2012-07-05 16:00,,2012-09-29 08:00,2012-10-05 16:00,,PT_Normal,,,,,/A/dEOp7NEa2oDJbVwvimg,kbz1uXPQU0KVAg15ehHgQg,,,N,0,0,,,2012-05-05 12:17,2012-05-16 14:02,admin,admin
437,129887,3769,19951,3746,1,0,N,N,N,CP_Drtn,TT_Task,DT_FixedDUR2,RV_OK,TK_NotStart,H-10-530,Heat insulation,3780,472,0,24,0,14,14,24,0,0,0,,,,2012-10-07 08:00,2012-10-09 16:00,,2012-08-09 08:00,2012-08-11 16:00,2012-08-09 08:00,2012-08-11 16:00,2012-08-09 08:00,2012-08-11 16:00,,2012-10-07 08:00,2012-10-09 16:00,,PT_Normal,,,,,MzUnx2pwgkCUIG9GCEafeA,C1iHtNVbN0+F7KSL2eeqgg,,,N,0,0,,,2012-05-05 12:17,2012-05-16 14:02,admin,admin
438,129888,3769,19965,3746,1,100,N,N,N,CP_Drtn,TT_Task,DT_FixedDUR2,RV_OK,TK_Complete,H-10-10,P.C  footings formwork,3777,,,0,56,0,56,40,0,0,0,,2012-03-18 00:00,2012-04-21 00:00,,,,,,,,2012-04-28 08:00,2012-05-02 16:00,,,,,PT_Normal,,,,,atFQ2nRefkCUCbvJdabEwA,QkJM3ZPVqEGwSmfvMqX1DQ,,,N,56,0,,,2012-05-05 12:17,2012-05-16 14:02,admin,admin
439,129889,3769,19965,3746,1,0,N,N,N,CP_Drtn,TT_Task,DT_FixedDUR2,RV_OK,TK_NotStart,H-10-310,Slab on grade work,3777,1104,0,40,0,20,20,40,0,0,0,,,,2012-10-09 08:00,2012-10-13 16:00,,2012-05-24 08:00,2012-05-28 16:00,2012-05-24 08:00,2012-05-28 16:00,2012-05-24 08:00,2012-05-28 16:00,,2012-10-09 08:00,2012-10-13 16:00,,PT_Normal,,,,,Xm5X6DBYP0uLbNYbzOs6nQ,VZ2fPoqzH0aV/YokfJGCKA,,,N,0,0,,,2012-05-05 12:17,2012-05-16 14:02,admin,admin
440,129890,3769,19951,3746,1,0,N,N,N,CP_Drtn,TT_Task,DT_FixedDUR2,RV_OK,TK_NotStart,H-10-550,Slopped plain concrete,3779,472,0,24,0,14,14,24,0,0,0,,,,2012-10-11 08:00,2012-10-13 16:00,,2012-08-13 08:00,2012-08-15 16:00,2012-08-13 08:00,2012-08-15 16:00,2012-08-13 08:00,2012-08-15 16:00,,2012-10-11 08:00,2012-10-13 16:00,,PT_Normal,,,,,J5uBZMh3o0aj/icA0dIMWw,32HKISWPeEefuKpoZggc7g,,,N,0,0,,,2012-05-05 12:17,2012-05-16 14:02,admin,admin
441,129891,3769,20028,3746,1,100,N,N,N,CP_Drtn,TT_Task,DT_FixedDUR2,RV_OK,TK_Complete,H-10-150,Columns Pouring works,3779,,,0,8,0,8,8,0,0,0,,2012-04-24 00:00,2012-04-24 00:00,,,,,,,,2012-05-31 08:00,2012-05-31 16:00,,,,,PT_Normal,,,,,bdTtB1OFj0ykwn+eC30uQQ,d/ckyV+g4UKXOgwhJQnHTw,,,N,8,0,,,2012-05-05 12:17,2012-05-16 14:02,admin,admin
442,129892,3769,20028,3746,1,100,N,N,N,CP_Drtn,TT_Task,DT_FixedDUR2,RV_OK,TK_Complete,H-10-120,Columns Steel works,3778,,,0,70,0,70,24,0,0,0,,2012-04-20 00:00,2012-04-23 00:00,,,,,,,,2012-05-11 08:00,2012-05-13 16:00,,,,,PT_Normal,,,,,NG/JqsQEx0iPn5cgYR/s0g,uPz+qTQKd02Fj4tAzvrhbA,,,N,70,0,,,2012-05-05 12:17,2012-05-16 14:02,admin,admin
443,129893,3769,20029,3746,1,100,N,N,N,CP_Drtn,TT_Task,DT_FixedDUR2,RV_OK,TK_Complete,H-10-280,Columns Pouring works,3779,,,0,5,0,5,8,0,0,0,,2012-05-07 00:00,2012-05-07 00:00,,,,,,,,2012-05-18 12:48,2012-05-19 12:48,,,,,PT_Normal,,,,,PSHAAsHpWEWWKH33b/lcFg,Pc5hcNIehkCeZBcH2atIQw,,,N,5,0,,,2012-05-05 12:17,2012-05-16 14:02,admin,admin
444,129894,3769,20029,3746,1,100,N,N,N,CP_Drtn,TT_Task,DT_FixedDUR2,RV_OK,TK_Complete,H-10-240,Columns Steel works,3778,,,0,40,0,40,24,0,0,0,,2012-05-04 00:00,2012-05-07 00:00,,,,,,,,2012-05-14 12:48,2012-05-17 12:48,,,,,PT_Normal,,,,,kNh4ngLr8kKDpPJZhjgxng,NBZOAeSUoEqQsGX27leNvg,,,N,40,0,,,2012-05-05 12:17,2012-05-16 14:02,admin,admin
445,129895,3769,20030,3746,1,0,N,N,N,CP_Drtn,TT_Task,DT_FixedDUR2,RV_OK,TK_NotStart,H-10-440,Columns Pouring works,3779,736,0,8,0,5,5,8,0,0,0,,,,2012-09-06 08:00,2012-09-06 16:00,,2012-06-06 08:00,2012-06-06 16:00,2012-06-06 08:00,2012-06-06 16:00,2012-06-06 08:00,2012-06-06 16:00,,2012-09-06 08:00,2012-09-06 16:00,,PT_Normal,,,,,PMaj2gMAp06vZbcxA9R0pA,rDyH+TIPqkeCTadjVud1Bg,,,N,0,0,,,2012-05-05 12:17,2012-05-16 14:02,admin,admin
446,129896,3769,20030,3746,1,0,N,N,N,CP_Drtn,TT_Task,DT_FixedDUR2,RV_OK,TK_NotStart,H-10-410,Columns Steel works,3778,736,0,24,0,40,40,24,0,0,0,,,,2012-09-02 08:00,2012-09-04 16:00,,2012-06-02 08:00,2012-06-04 16:00,2012-06-02 08:00,2012-06-04 16:00,2012-06-02 08:00,2012-06-04 16:00,,2012-09-02 08:00,2012-09-04 16:00,,PT_Normal,,,,,oV621OQJ4kCBAocGe8aPSQ,0+bvzzEmR0WL5KNVKXS8tA,,,N,0,0,,,2012-05-05 12:17,2012-05-16 14:02,admin,admin
447,129897,3769,20028,3746,1,100,N,N,N,CP_Drtn,TT_Task,DT_FixedDUR2,RV_OK,TK_Complete,H-10-180,Slab steel works,3778,,,0,131,0,131,32,0,0,0,,2012-04-27 00:00,2012-04-30 00:00,,,,,,,,2012-05-23 08:00,2012-05-26 16:00,,,,,PT_Normal,,,,,wkP/QNR0JUK3zLKgl8KiVw,IrTGOfYwWU2jVKb8VeGwkw,,,N,131,0,,,2012-05-05 12:17,2012-05-16 14:02,admin,admin
448,129898,3769,20028,3746,1,100,N,N,N,CP_Drtn,TT_Task,DT_FixedDUR2,RV_OK,TK_Complete,H-10-210,Slab Pouring works,3779,,,0,12,0,12,8,0,0,0,,2012-04-30 00:00,2012-04-30 00:00,,,,,,,,2012-05-28 08:00,2012-05-28 16:00,,,,,PT_Normal,,,,,kEPaCCEeBk2n6sNxduX4qg,skf+OFfbMUaZgqmDXZjpeg,,,N,12,0,,,2012-05-05 12:17,2012-05-16 14:02,admin,admin
449,129899,3769,20029,3746,1,100,N,N,N,CP_Drtn,TT_Task,DT_FixedDUR2,RV_OK,TK_Complete,H-10-350,Slab steel works,3778,,,0,131,0,131,32,0,0,0,,2012-05-10 00:00,2012-05-13 00:00,,,,,,,,2012-06-04 12:48,2012-06-08 12:48,,,,,PT_Normal,,,,,JZOFbde/fkyAithIMkmewg,nVm+OMWdtU+cNV/6iEVSTQ,,,N,131,0,,,2012-05-05 12:17,2012-05-16 14:02,admin,admin
450,129900,3769,20029,3746,1,100,N,N,N,CP_Drtn,TT_Task,DT_FixedDUR2,RV_OK,TK_Complete,H-10-380,Slab Pouring works,3779,,,0,12,0,12,8,0,0,0,,2012-05-14 00:00,2012-05-14 00:00,,,,,,,,2012-06-09 12:48,2012-06-10 12:48,,,,,PT_Normal,,,,,iI4cxCpYaka8Cu7jK2pBMQ,lzLmH/i+a0yBQOSzcxFThA,,,N,12,0,,,2012-05-05 12:17,2012-05-16 14:02,admin,admin
451,129901,3769,20030,3746,1,0,N,N,N,CP_Drtn,TT_Task,DT_FixedDUR2,RV_OK,TK_NotStart,H-10-470,Slab steel works,3778,736,0,32,0,131,131,32,0,0,0,,,,2012-09-23 08:00,2012-09-26 16:00,,2012-06-23 08:00,2012-06-26 16:00,2012-06-23 08:00,2012-06-26 16:00,2012-06-23 08:00,2012-06-26 16:00,,2012-09-23 08:00,2012-09-26 16:00,,PT_Normal,,,,,R+sMJ3SV1k66v97wSRGuIg,RclEthIV+keLPY0fAE7HhA,,,N,0,0,,,2012-05-05 12:17,2012-05-16 14:02,admin,admin
452,129902,3769,20030,3746,1,0,N,N,N,CP_Drtn,TT_Task,DT_FixedDUR2,RV_OK,TK_NotStart,H-10-500,Slab Pouring works,3779,736,0,8,0,12,12,8,0,0,0,,,,2012-09-28 08:00,2012-09-28 16:00,,2012-06-28 08:00,2012-06-28 16:00,2012-06-28 08:00,2012-06-28 16:00,2012-06-28 08:00,2012-06-28 16:00,,2012-09-28 08:00,2012-09-28 16:00,,PT_Normal,,,,,tCWMpjy8CUCsdXi27SEy5Q,v3XOYaKxRU2RLXTxEkl+fg,,,N,0,0,,,2012-05-05 12:17,2012-05-16 14:02,admin,admin
453,129903,3769,19989,3746,1,100,N,N,N,CP_Drtn,TT_Task,DT_FixedDUR2,RV_OK,TK_Complete,H-10-90,R.C footings Pouring works,3779,,,0,11,0,11,8,0,0,0,,2012-04-16 00:00,2012-04-16 00:00,,,,,,,,2012-05-21 08:00,2012-05-21 16:00,,,,,PT_Normal,,,,,S5DC5iPw70GVgUqNJUD0AQ,XsT38gA9BUuLuLLIL1B1PA,,,N,11,0,,,2012-05-05 12:17,2012-05-16 14:02,admin,admin
454,129904,3769,19989,3746,1,100,N,N,N,CP_Drtn,TT_Task,DT_FixedDUR2,RV_OK,TK_Complete,H-10-60,R.C footings steel works,3778,,,0,76,0,76,56,0,0,0,,2012-04-12 00:00,2012-04-15 00:00,,,,,,,,2012-05-07 08:00,2012-05-13 16:00,,,,,PT_Normal,,,,,lTzyIBokNkCy2Q+GhcshiA,YM+zIR85jkSOUX2kJkq1Zg,,,N,76,0,,,2012-05-05 12:17,2012-05-16 14:02,admin,admin
455,129905,3769,20035,3746,1,100,N,N,N,CP_Drtn,TT_Task,DT_FixedDUR2,RV_OK,TK_Complete,H-11-40,R.C footings form work,3777,,,0,29,0,29,24,0,0,0,,2012-04-16 00:00,2012-04-21 00:00,,,,,,,,2012-06-19 08:00,2012-06-21 16:00,,,,,PT_Normal,,,,,6XAnMsOXDUeCipJjMVUdug,pI5YX2z4R0G8sUa4oXL2sQ,,,N,29,0,,,2012-05-05 12:17,2012-05-16 14:02,admin,admin
456,129906,3769,20032,3746,1,100,N,N,N,CP_Drtn,TT_Task,DT_FixedDUR2,RV_OK,TK_Active,H-11-100,Columns form works,3777,1218,1218,6,19.55,3.45,23,40,0,0,0,,2012-04-29 00:00,,2012-10-15 10:00,2012-10-15 16:00,,2012-05-16 08:00,2012-05-16 14:00,2012-05-16 08:00,2012-05-16 14:00,2012-06-23 09:12,2012-06-28 09:12,,2012-10-15 10:00,2012-10-15 16:00,,PT_Normal,,,,,ox4waVkYX02RSLRC/svMXA,ZNxJohhQ0kig/lH/L0DlNA,,,N,19.55,0,,,2012-05-05 12:17,2012-05-16 14:02,admin,admin
457,129907,3769,20032,3746,1,0,N,N,N,CP_Drtn,TT_Task,DT_FixedDUR2,RV_OK,TK_Active,H-11-160,Slab form works,3777,952,0,24,23.1,9.9,33,80,0,0,0,,2012-05-12 00:00,,2012-09-12 08:00,2012-09-14 16:00,,2012-05-16 08:00,2012-05-18 16:00,2012-05-16 08:00,2012-05-18 16:00,2012-07-03 12:00,2012-07-13 12:00,,2012-09-12 08:00,2012-09-14 16:00,,PT_Normal,,,,,Unnmg2WgO0aCmLuU3+ScNg,+gwC3XvkS0Sgo6GLcekxqA,,,N,23.1,0,,,2012-05-05 12:17,2012-05-16 14:02,admin,admin
458,129908,3769,20037,3746,1,0,N,N,N,CP_Drtn,TT_Task,DT_FixedDUR2,RV_OK,TK_NotStart,H-11-220,Columns form works,,672,0,32,0,0,0,32,0,0,0,,,,2012-08-16 08:00,2012-08-19 16:00,,2012-05-24 08:00,2012-05-27 16:00,2012-05-24 08:00,2012-05-27 16:00,2012-05-24 08:00,2012-05-27 16:00,,2012-08-16 08:00,2012-08-19 16:00,,PT_Normal,,,,,UddtARK38kCUQR6YCfK0jA,yM6AWXiM8EeF4M6wL9YRBg,,,N,0,0,,,2012-05-05 12:17,2012-05-16 14:02,admin,admin
459,129909,3769,20037,3746,1,0,N,N,N,CP_Drtn,TT_Task,DT_FixedDUR2,RV_OK,TK_NotStart,H-11-290,Slab form works,3777,672,0,56,0,33,33,56,0,0,0,,,,2012-08-26 08:00,2012-09-01 16:00,,2012-06-03 08:00,2012-06-09 16:00,2012-06-03 08:00,2012-06-09 16:00,2012-06-03 08:00,2012-06-09 16:00,,2012-08-26 08:00,2012-09-01 16:00,,PT_Normal,,,,,DiiwIcYHRkGGrZ0j9R2jXw,eUmZ5ZkllU65T/nqcI1pdQ,,,N,0,0,,,2012-05-05 12:17,2012-05-16 14:02,admin,admin
460,129910,3769,20016,3746,1,0,N,N,N,CP_Drtn,TT_Task,DT_FixedDUR2,RV_OK,TK_NotStart,H-11-380,Columns form works,,672,0,40,0,0,0,40,0,0,0,,,,2012-09-09 08:00,2012-09-13 16:00,,2012-06-17 08:00,2012-06-21 16:00,2012-06-17 08:00,2012-06-21 16:00,2012-06-17 08:00,2012-06-21 16:00,,2012-09-09 08:00,2012-09-13 16:00,,PT_Normal,,,,,PQQQFvu3gkKo5hCdCHOeFA,iWO+P2EnB0a/PHSeVSUlPA,,,N,0,0,,,2012-05-05 12:17,2012-05-16 14:02,admin,admin
461,129911,3769,20016,3746,1,0,N,N,N,CP_Drtn,TT_Task,DT_FixedDUR2,RV_OK,TK_NotStart,H-11-450,Slab form works,3777,672,0,56,0,33,33,56,0,0,0,,,,2012-09-20 08:00,2012-09-26 16:00,,2012-06-28 08:00,2012-07-04 16:00,2012-06-28 08:00,2012-07-04 16:00,2012-06-28 08:00,2012-07-04 16:00,,2012-09-20 08:00,2012-09-26 16:00,,PT_Normal,,,,,taIOhpjsK061cCtYCoiyMQ,Oz+YL2zHMk+k+YZGY/Un2w,,,N,0,0,,,2012-05-05 12:17,2012-05-16 14:02,admin,admin
462,129912,3769,19938,3746,1,0,N,N,N,CP_Drtn,TT_Task,DT_FixedDUR2,RV_OK,TK_NotStart,H-11-250,Footing insulation,3780,952,0,24,0,4,4,24,0,0,0,,,,2012-09-30 08:00,2012-10-02 16:00,,2012-06-03 08:00,2012-06-05 16:00,2012-06-03 08:00,2012-06-05 16:00,2012-06-03 08:00,2012-06-05 16:00,,2012-09-30 08:00,2012-10-02 16:00,,PT_Normal,,,,,QqNqXVsSRUWWSE27uTb+RQ,mt0MUnseVkiE5PyRXG/wQg,,,N,0,0,,,2012-05-05 12:17,2012-05-16 14:02,admin,admin
463,129913,3769,19938,3746,1,0,N,N,N,CP_Drtn,TT_Task,DT_FixedDUR2,RV_OK,TK_NotStart,H-11-510,Water proofing membrane,3780,672,0,24,0,26,26,24,0,0,0,,,,2012-10-04 08:00,2012-10-06 16:00,,2012-07-12 08:00,2012-07-14 16:00,2012-07-12 08:00,2012-07-14 16:00,2012-07-12 08:00,2012-07-14 16:00,,2012-10-04 08:00,2012-10-06 16:00,,PT_Normal,,,,,9gDBovJYBEaiHrM8c8btaQ,kbz1uXPQU0KVAg15ehHgQg,,,N,0,0,,,2012-05-05 12:17,2012-05-16 14:02,admin,admin
464,129914,3769,19938,3746,1,0,N,N,N,CP_Drtn,TT_Task,DT_FixedDUR2,RV_OK,TK_NotStart,H-11-530,Heat insulation,3780,480,0,24,0,7,7,24,0,0,0,,,,2012-10-08 08:00,2012-10-10 16:00,,2012-08-09 08:00,2012-08-11 16:00,2012-08-09 08:00,2012-08-11 16:00,2012-08-09 08:00,2012-08-11 16:00,,2012-10-08 08:00,2012-10-10 16:00,,PT_Normal,,,,,59FaXMlBTEW8odrCbMjOvQ,C1iHtNVbN0+F7KSL2eeqgg,,,N,0,0,,,2012-05-05 12:17,2012-05-16 14:02,admin,admin
465,129915,3769,19973,3746,1,100,N,N,N,CP_Drtn,TT_Task,DT_FixedDUR2,RV_OK,TK_Complete,H-11-10,P.C  footings formwork,3777,,,0,15,0,15,24,0,0,0,,2012-04-08 00:00,2012-04-13 00:00,,,,,,,,2012-06-14 08:00,2012-06-16 16:00,,,,,PT_Normal,,,,,dcCbjLJSCEqRJH77r10GvA,QkJM3ZPVqEGwSmfvMqX1DQ,,,N,15,0,,,2012-05-05 12:17,2012-05-16 14:02,admin,admin
466,129916,3769,19973,3746,1,0,N,N,N,CP_Drtn,TT_Task,DT_FixedDUR2,RV_OK,TK_NotStart,H-11-320,Slab on grade work,3777,952,0,24,0,10,10,24,0,0,0,,,,2012-10-11 08:00,2012-10-13 16:00,,2012-06-14 08:00,2012-06-16 16:00,2012-06-14 08:00,2012-06-16 16:00,2012-06-14 08:00,2012-06-16 16:00,,2012-10-11 08:00,2012-10-13 16:00,,PT_Normal,,,,,BkehA2NyqkSeigU7q1/5fw,VZ2fPoqzH0aV/YokfJGCKA,,,N,0,0,,,2012-05-05 12:17,2012-05-16 14:02,admin,admin
467,129917,3769,19938,3746,1,0,N,N,N,CP_Drtn,TT_Task,DT_FixedDUR2,RV_OK,TK_NotStart,H-11-550,Slopped plain concrete,3779,480,0,16,0,7,7,16,0,0,0,,,,2012-10-12 08:00,2012-10-13 16:00,,2012-08-13 08:00,2012-08-14 16:00,2012-08-13 08:00,2012-08-14 16:00,2012-08-13 08:00,2012-08-14 16:00,,2012-10-12 08:00,2012-10-13 16:00,,PT_Normal,,,,,nr1PR3zDOkeA9Kx+Xsn6jw,32HKISWPeEefuKpoZggc7g,,,N,0,0,,,2012-05-05 12:17,2012-05-16 14:02,admin,admin
468,129918,3769,20032,3746,1,0,N,N,N,CP_Drtn,TT_Task,DT_FixedDUR2,RV_OK,TK_Active,H-11-150,Columns Pouring works,3779,1222.8,1222.8,1.2,4.25,0.75,5,8,0,0,0,,2012-05-11 00:00,,2012-10-15 14:48,2012-10-15 16:00,,2012-05-16 08:00,2012-05-16 09:12,2012-05-16 08:00,2012-05-16 09:12,2012-07-02 09:12,2012-07-03 09:12,,2012-10-15 14:48,2012-10-15 16:00,,PT_Normal,,,,,jOdwHpnPL0qv1qYZIAjbdQ,d/ckyV+g4UKXOgwhJQnHTw,,,N,4.25,0,,,2012-05-05 12:17,2012-05-16 14:02,admin,admin
469,129919,3769,20032,3746,1,0,N,N,N,CP_Drtn,TT_Task,DT_FixedDUR2,RV_OK,TK_Active,H-11-120,Columns Steel works,3778,1221.6,1221.6,2.4,34,6,40,16,0,0,0,,2012-05-05 00:00,,2012-10-15 13:36,2012-10-15 16:00,,2012-05-16 08:00,2012-05-16 10:24,2012-05-16 08:00,2012-05-16 10:24,2012-06-29 09:12,2012-07-01 09:12,,2012-10-15 13:36,2012-10-15 16:00,,PT_Normal,,,,,2+b3GUstskywPcyxQDU6Rg,uPz+qTQKd02Fj4tAzvrhbA,,,N,34,0,,,2012-05-05 12:17,2012-05-16 14:02,admin,admin
470,129920,3769,20037,3746,1,0,N,N,N,CP_Drtn,TT_Task,DT_FixedDUR2,RV_OK,TK_NotStart,H-11-280,Columns Pouring works,,672,0,8,0,0,0,8,0,0,0,,,,2012-08-25 08:00,2012-08-25 16:00,,2012-06-02 08:00,2012-06-02 16:00,2012-06-02 08:00,2012-06-02 16:00,2012-06-02 08:00,2012-06-02 16:00,,2012-08-25 08:00,2012-08-25 16:00,,PT_Normal,,,,,6sMWgeYp4EWmBUh+C2YJig,Pc5hcNIehkCeZBcH2atIQw,,,N,0,0,,,2012-05-05 12:17,2012-05-16 14:02,admin,admin
471,129921,3769,20037,3746,1,0,N,N,N,CP_Drtn,TT_Task,DT_FixedDUR2,RV_OK,TK_NotStart,H-11-240,Columns Steel works,,672,0,24,0,0,0,24,0,0,0,,,,2012-08-21 08:00,2012-08-23 16:00,,2012-05-29 08:00,2012-05-31 16:00,2012-05-29 08:00,2012-05-31 16:00,2012-05-29 08:00,2012-05-31 16:00,,2012-08-21 08:00,2012-08-23 16:00,,PT_Normal,,,,,MBz/c0M2rES+Vvk2VeyWzQ,NBZOAeSUoEqQsGX27leNvg,,,N,0,0,,,2012-05-05 12:17,2012-05-16 14:02,admin,admin
472,129922,3769,20016,3746,1,0,N,N,N,CP_Drtn,TT_Task,DT_FixedDUR2,RV_OK,TK_NotStart,H-11-440,Columns Pouring works,,672,0,8,0,0,0,8,0,0,0,,,,2012-09-19 08:00,2012-09-19 16:00,,2012-06-27 08:00,2012-06-27 16:00,2012-06-27 08:00,2012-06-27 16:00,2012-06-27 08:00,2012-06-27 16:00,,2012-09-19 08:00,2012-09-19 16:00,,PT_Normal,,,,,vV+JmCZ57EGpSlUS2rQIAg,rDyH+TIPqkeCTadjVud1Bg,,,N,0,0,,,2012-05-05 12:17,2012-05-16 14:02,admin,admin
473,129923,3769,20016,3746,1,0,N,N,N,CP_Drtn,TT_Task,DT_FixedDUR2,RV_OK,TK_NotStart,H-11-410,Columns Steel works,,672,0,24,0,0,0,24,0,0,0,,,,2012-09-15 08:00,2012-09-17 16:00,,2012-06-23 08:00,2012-06-25 16:00,2012-06-23 08:00,2012-06-25 16:00,2012-06-23 08:00,2012-06-25 16:00,,2012-09-15 08:00,2012-09-17 16:00,,PT_Normal,,,,,6sOvUQdznEipng955XTmTA,0+bvzzEmR0WL5KNVKXS8tA,,,N,0,0,,,2012-05-05 12:17,2012-05-16 14:02,admin,admin
474,129924,3769,20032,3746,1,0,N,N,N,CP_Drtn,TT_Task,DT_FixedDUR2,RV_OK,TK_Active,H-11-180,Slab steel works,3778,704,0,16,18.5,18.5,37,32,0,0,0,,2012-05-14 00:00,,2012-08-12 08:00,2012-08-13 16:00,,2012-05-16 08:00,2012-05-17 16:00,2012-05-16 08:00,2012-05-17 16:00,2012-07-14 12:00,2012-07-18 12:00,,2012-08-12 08:00,2012-08-13 16:00,,PT_Normal,,,,,yma63a1TxUaUOIsxhVXQHQ,IrTGOfYwWU2jVKb8VeGwkw,,,N,18.5,0,,,2012-05-05 12:17,2012-05-16 14:02,admin,admin
475,129925,3769,20032,3746,1,0,N,N,N,CP_Drtn,TT_Task,DT_FixedDUR2,RV_OK,TK_NotStart,H-11-210,Slab Pouring works,3779,704,32,8,0,3,3,8,0,0,0,,,,2012-08-15 08:00,2012-08-15 16:00,,2012-05-19 08:00,2012-05-19 16:00,2012-05-19 08:00,2012-05-19 16:00,2012-05-19 08:00,2012-05-19 16:00,,2012-08-15 08:00,2012-08-15 16:00,,PT_Normal,,,,,KvyiCQk/Q0S9l9vsynoMqQ,skf+OFfbMUaZgqmDXZjpeg,,,N,0,0,,,2012-05-05 12:17,2012-05-16 14:02,admin,admin
476,129926,3769,20037,3746,1,0,N,N,N,CP_Drtn,TT_Task,DT_FixedDUR2,RV_OK,TK_NotStart,H-11-330,Slab steel works,3778,672,0,32,0,37,37,32,0,0,0,,,,2012-09-03 08:00,2012-09-06 16:00,,2012-06-11 08:00,2012-06-14 16:00,2012-06-11 08:00,2012-06-14 16:00,2012-06-11 08:00,2012-06-14 16:00,,2012-09-03 08:00,2012-09-06 16:00,,PT_Normal,,,,,uMCaWN0bgEq9y0/g0do4fw,nVm+OMWdtU+cNV/6iEVSTQ,,,N,0,0,,,2012-05-05 12:17,2012-05-16 14:02,admin,admin
477,129927,3769,20037,3746,1,0,N,N,N,CP_Drtn,TT_Task,DT_FixedDUR2,RV_OK,TK_NotStart,H-11-360,Slab Pouring works,3779,672,0,8,0,3,3,8,0,0,0,,,,2012-09-08 08:00,2012-09-08 16:00,,2012-06-16 08:00,2012-06-16 16:00,2012-06-16 08:00,2012-06-16 16:00,2012-06-16 08:00,2012-06-16 16:00,,2012-09-08 08:00,2012-09-08 16:00,,PT_Normal,,,,,T9YLfkMKxUWjf9JRXGqVZw,lzLmH/i+a0yBQOSzcxFThA,,,N,0,0,,,2012-05-05 12:17,2012-05-16 14:02,admin,admin
478,129928,3769,20016,3746,1,0,N,N,N,CP_Drtn,TT_Task,DT_FixedDUR2,RV_OK,TK_NotStart,H-11-470,Slab steel works,3778,672,0,32,0,37,37,32,0,0,0,,,,2012-09-28 08:00,2012-10-01 16:00,,2012-07-06 08:00,2012-07-09 16:00,2012-07-06 08:00,2012-07-09 16:00,2012-07-06 08:00,2012-07-09 16:00,,2012-09-28 08:00,2012-10-01 16:00,,PT_Normal,,,,,R32H9yUsJUOKca8BetRAAQ,RclEthIV+keLPY0fAE7HhA,,,N,0,0,,,2012-05-05 12:17,2012-05-16 14:02,admin,admin
479,129929,3769,20016,3746,1,0,N,N,N,CP_Drtn,TT_Task,DT_FixedDUR2,RV_OK,TK_NotStart,H-11-500,Slab Pouring works,3779,672,0,8,0,3,3,8,0,0,0,,,,2012-10-03 08:00,2012-10-03 16:00,,2012-07-11 08:00,2012-07-11 16:00,2012-07-11 08:00,2012-07-11 16:00,2012-07-11 08:00,2012-07-11 16:00,,2012-10-03 08:00,2012-10-03 16:00,,PT_Normal,,,,,a/FJVg+iuUuwQgd3+MvHfQ,v3XOYaKxRU2RLXTxEkl+fg,,,N,0,0,,,2012-05-05 12:17,2012-05-16 14:02,admin,admin
480,129930,3769,20035,3746,1,0,N,N,N,CP_Drtn,TT_Task,DT_FixedDUR2,RV_OK,TK_Active,H-11-90,R.C footings Pouring works,3779,1222.8,1222.8,1.2,3.4,0.6,4,8,0,0,0,,2012-04-28 00:00,,2012-10-15 14:48,2012-10-15 16:00,,2012-05-16 08:00,2012-05-16 09:12,2012-05-16 08:00,2012-05-16 09:12,2012-06-19 08:00,2012-06-19 16:00,,2012-10-15 14:48,2012-10-15 16:00,,PT_Normal,,,,,Lp10hhD9ckCi57jJiMuwMw,XsT38gA9BUuLuLLIL1B1PA,,,N,3.4,0,,,2012-05-05 12:17,2012-05-16 14:02,admin,admin
481,129931,3769,20035,3746,1,100,N,N,N,CP_Drtn,TT_Task,DT_FixedDUR2,RV_OK,TK_Complete,H-11-60,R.C footings steel works,3778,,,0,26,0,26,24,0,0,0,,2012-04-22 00:00,2012-04-25 00:00,,,,,,,,2012-06-23 08:00,2012-06-25 16:00,,,,,PT_Normal,,,,,ng0+MVAHVEmxB+Ezle53mw,YM+zIR85jkSOUX2kJkq1Zg,,,N,26,0,,,2012-05-05 12:17,2012-05-16 14:02,admin,admin
482,129932,3769,19982,1191,1,100,N,N,N,CP_Drtn,TT_Task,DT_FixedDUR2,RV_OK,TK_Complete,C-1-40,R.C footings form work,3777,,,0,57,0,57,48,0,0,0,,2012-03-20 00:00,2012-04-25 00:00,,,,,,,,2012-05-05 08:00,2012-05-10 16:00,,,,,PT_Normal,,,,,QuipwtQtLUe21TbC0QQ8WA,hUk/u3CU+kiM9AQQpMFc2w,,,N,57,0,,,2012-05-05 12:17,2012-05-16 14:02,admin,admin
483,129933,3769,19962,1191,1,100,N,N,N,CP_Drtn,TT_Task,DT_FixedDUR2,RV_OK,TK_Complete,C-1-100,Columns&walls form works,3777,,,0,78,0,78,96,0,0,0,,2012-04-02 00:00,2012-04-06 00:00,,,,,,,,2012-05-20 08:00,2012-05-31 16:00,,,,,PT_Normal,,,,,sIpn2SG71kGV0ZRqC0Mmcg,fhulFhum+027S0qanjlQuw,,,N,78,0,,,2012-05-05 12:17,2012-05-16 14:02,admin,admin
484,129934,3769,19962,1191,1,100,N,N,N,CP_Drtn,TT_Task,DT_FixedDUR2,RV_OK,TK_Complete,C-1-160,Slab form works,3777,,,0,130,0,130,72,0,0,0,,2012-04-15 00:00,2012-04-23 00:00,,,,,,,,2012-04-29 08:00,2012-05-07 16:00,,,,,PT_Normal,,,,,NXk4BR7GVUyAFVZEk/VzDw,nLdsp28CI0m1WqOKnWw9kw,,,N,130,0,,,2012-05-05 12:17,2012-05-16 14:02,admin,admin
485,129935,3769,19944,1191,1,0,N,N,N,CP_Drtn,TT_Task,DT_FixedDUR2,RV_OK,TK_NotStart,C-1-280,Footing insulation,3780,813.6,0,64,0,9,9,64,0,0,0,,,,2012-10-06 08:00,2012-10-14 16:00,,2012-06-09 10:24,2012-06-18 10:24,2012-06-09 10:24,2012-06-18 10:24,2012-06-09 10:24,2012-06-18 10:24,,2012-10-06 08:00,2012-10-14 16:00,,PT_Normal,,,,,cRqKDRTKQ0Wm4xJaj1LEIQ,KYQgMrdOwkeaq73fPf5P6w,,,N,0,0,,,2012-05-05 12:17,2012-05-16 14:02,admin,admin
486,129936,3769,19944,1191,1,0,N,N,N,CP_Drtn,TT_Task,DT_FixedDUR2,RV_OK,TK_Active,C-1-220,Water proofing membrane,3780,897.6,0,22.4,7.8,5.2,13,56,0,0,0,,2012-05-10 00:00,,2012-09-24 09:36,2012-09-26 16:00,,2012-05-16 08:00,2012-05-19 14:24,2012-05-16 08:00,2012-05-19 14:24,2012-05-22 08:00,2012-05-28 16:00,,2012-09-24 09:36,2012-09-26 16:00,,PT_Normal,,,,,6Fxc514m4U2MdR4oFk5PXg,N7GCfT6PYU+8GXtRGXmsFQ,,,N,7.8,0,,,2012-05-05 12:17,2012-05-16 14:02,admin,admin
487,129937,3769,19944,1191,1,0,N,N,N,CP_Drtn,TT_Task,DT_FixedDUR2,RV_OK,TK_NotStart,C-1-240,Heat insulation,3780,424,0,40,0,6,6,40,0,0,0,,,,2012-09-29 08:00,2012-10-03 16:00,,2012-07-29 08:00,2012-08-02 16:00,2012-07-29 08:00,2012-08-02 16:00,2012-07-29 08:00,2012-08-02 16:00,,2012-09-29 08:00,2012-10-03 16:00,,PT_Normal,,,,,7f+0GEB4xUevoJCAZN2aZw,MhUn3dCOC0C2ZTg7ZzS2Yw,,,N,0,0,,,2012-05-05 12:17,2012-05-16 14:02,admin,admin
488,129938,3769,19982,1191,1,100,N,N,N,CP_Drtn,TT_Task,DT_FixedDUR2,RV_OK,TK_Complete,C-1-10,P.C  footings formwork,3777,,,0,33,0,33,48,0,0,0,,2012-03-18 00:00,2012-03-18 00:00,,,,,,,,2012-04-28 08:00,2012-05-03 16:00,,,,,PT_Normal,,,,,2o4iCZ7N2kGUbbaAazOWEw,uuMWBN+sX0uNxRR+bcXoSQ,,,N,33,0,,,2012-05-05 12:17,2012-05-16 14:02,admin,admin
489,129939,3769,19944,1191,1,0,N,N,N,CP_Drtn,TT_Task,DT_FixedDUR2,RV_OK,TK_NotStart,C-1-260,Slopped plain concrete,3779,424,0,56,0,8,8,56,0,0,0,,,,2012-10-06 08:00,2012-10-13 16:00,,2012-08-05 08:00,2012-08-12 16:00,2012-08-05 08:00,2012-08-12 16:00,2012-08-05 08:00,2012-08-12 16:00,,2012-10-06 08:00,2012-10-13 16:00,,PT_Normal,,,,,rQtgd9aackGFs09r9qB2KQ,tF02ln4NAkOGbewu6QpUgA,,,N,0,0,,,2012-05-05 12:17,2012-05-16 14:02,admin,admin
490,129940,3769,19962,1191,1,0,N,N,N,CP_Drtn,TT_Task,DT_FixedDUR2,RV_OK,TK_NotStart,C-1-270,Removing form work,3777,813.6,0,40,0,6,6,40,0,0,0,,,,2012-09-30 08:00,2012-10-04 16:00,,2012-06-03 10:24,2012-06-09 10:24,2012-06-03 10:24,2012-06-09 10:24,2012-06-03 10:24,2012-06-09 10:24,,2012-09-30 08:00,2012-10-04 16:00,,PT_Normal,,,,,R51oGFAYXE6fOkAZYNdn7Q,0stiq1bmP0i8mWpbRkzynQ,,,N,0,0,,,2012-05-05 12:17,2012-05-16 14:02,admin,admin
491,129941,3769,19982,1191,1,100,N,N,N,CP_Drtn,TT_Task,DT_FixedDUR2,RV_OK,TK_Complete,C-1-90,R.C footings Pouring works,3779,,,0,6,0,6,8,0,0,0,,2012-04-01 00:00,2012-04-02 00:00,,,,,,,,2012-04-29 08:00,2012-04-29 16:00,,,,,PT_Normal,,,,,Uo91dg8lbkCPFmSu+V9fIw,Y9X68I3ylkmPLAtERptnCA,,,N,6,0,,,2012-05-05 12:17,2012-05-16 14:02,admin,admin
492,129942,3769,19982,1191,1,100,N,N,N,CP_Drtn,TT_Task,DT_FixedDUR2,RV_OK,TK_Complete,C-1-60,R.C footings steel works,3778,,,0,48,0,48,48,0,0,0,,2012-03-25 00:00,2012-03-28 00:00,,,,,,,,2012-05-12 08:00,2012-05-17 16:00,,,,,PT_Normal,,,,,FIdUa3RLDUmsZeKbNH0FLw,pkRtUtz43Een1cKa8yA4oQ,,,N,48,0,,,2012-05-05 12:17,2012-05-16 14:02,admin,admin
493,129943,3769,19962,1191,1,100,N,N,N,CP_Drtn,TT_Task,DT_FixedDUR2,RV_OK,TK_Complete,C-1-150,Columns&walls pouring works,3779,,,0,13,0,13,8,0,0,0,,2012-04-09 00:00,2012-04-09 00:00,,,,,,,,2012-05-24 08:00,2012-05-24 16:00,,,,,PT_Normal,,,,,cK8SPrb+6kK1tBhRcG+rNg,7wqY2lNsuEyWzSmcRdYj7w,,,N,13,0,,,2012-05-05 12:17,2012-05-16 14:02,admin,admin
494,129944,3769,19962,1191,1,100,N,N,N,CP_Drtn,TT_Task,DT_FixedDUR2,RV_OK,TK_Complete,C-1-120,Columns&walls Steel works,3778,,,0,60,0,60,48,0,0,0,,2012-04-06 00:00,2012-04-09 00:00,,,,,,,,2012-06-02 08:00,2012-06-07 16:00,,,,,PT_Normal,,,,,6BD34OgYNE+a7ES3spPMig,V+cyO5XX0kKmRXJEqFVnvQ,,,N,60,0,,,2012-05-05 12:17,2012-05-16 14:02,admin,admin
495,129945,3769,19962,1191,1,100,N,N,N,CP_Drtn,TT_Task,DT_FixedDUR2,RV_OK,TK_Complete,C-1-180,Slab steel works,3778,,,0,103,0,103,40,0,0,0,,2012-04-20 00:00,2012-04-24 00:00,,,,,,,,2012-05-09 08:00,2012-05-13 16:00,,,,,PT_Normal,,,,,koQOOChLAkmmWqgk16s1oA,u+kaKDBrXUSNxcds3z27aQ,,,N,103,0,,,2012-05-05 12:17,2012-05-16 14:02,admin,admin
496,129946,3769,19962,1191,1,100,N,N,N,CP_Drtn,TT_Task,DT_FixedDUR2,RV_OK,TK_Active,C-1-210,Slab Pouring works,3779,813.6,0,2.4,11.9,5.1,17,8,0,0,0,,2012-04-25 00:00,,2012-09-11 13:36,2012-09-11 16:00,,2012-05-16 08:00,2012-05-16 10:24,2012-05-16 08:00,2012-05-16 10:24,2012-05-15 08:00,2012-05-15 16:00,,2012-09-11 13:36,2012-09-11 16:00,,PT_Normal,,,,,KW4P3hAwc0K7C4Qi8wVT4A,VimSYKRvKkaFcK9CkQBSaA,,,N,11.9,0,,,2012-05-05 12:17,2012-05-16 14:02,admin,admin
497,129947,3769,19932,1191,1,100,N,N,N,CP_Drtn,TT_Task,DT_FixedDUR2,RV_OK,TK_Complete,C-2-40,R.C footings form work,3777,,,0,68,0,68,56,0,0,0,,2012-03-19 00:00,2012-03-24 00:00,,,,,,,,2012-04-29 08:00,2012-05-05 16:00,,,,,PT_Normal,,,,,uORHZofyh0GCKDSawjC4BQ,jvdhJWJrqkiVJjP2saxibA,,,N,68,0,,,2012-05-05 12:17,2012-05-16 14:02,admin,admin
498,129948,3769,19966,1191,1,100,N,N,N,CP_Drtn,TT_Task,DT_FixedDUR2,RV_OK,TK_Complete,C-2-100,Columns&walls form works,3777,,,0,93,0,93,80,0,0,0,,2012-03-31 00:00,2012-04-05 00:00,,,,,,,,2012-04-29 08:00,2012-05-08 16:00,,,,,PT_Normal,,,,,uIFz+vPC3ky+3W1cXF1lCw,WSESfDsy6kqLe9V+elhgcw,,,N,93,0,,,2012-05-05 12:17,2012-05-16 14:02,admin,admin
499,129949,3769,19966,1191,1,100,N,N,N,CP_Drtn,TT_Task,DT_FixedDUR2,RV_OK,TK_Complete,C-2-160,Slab form works,3777,,,0,156,0,156,64,0,0,0,,2012-04-12 00:00,2012-04-17 00:00,,,,,,,,2012-05-24 08:00,2012-05-31 16:00,,,,,PT_Normal,,,,,Dl/V381HIUCyZu28sU/vew,NNopCSSPPkSexmjWWZIb5A,,,N,156,0,,,2012-05-05 12:17,2012-05-16 14:02,admin,admin
500,129950,3769,19983,1191,1,0,N,N,N,CP_Drtn,TT_Task,DT_FixedDUR2,RV_OK,TK_Active,C-2-280,Footing insulation,3780,1027.2,0,12.8,8.8,2.2,11,64,0,0,0,,2012-05-12 00:00,,2012-10-13 11:12,2012-10-14 16:00,,2012-05-16 08:00,2012-05-17 12:48,2012-05-16 08:00,2012-05-17 12:48,2012-05-23 10:24,2012-05-31 10:24,,2012-10-13 11:12,2012-10-14 16:00,,PT_Normal,,,,,Z/Jq0fVhBkOJsdAHLJkBGQ,x9vQe02ELkmO/QpEc9Gy7A,,,N,8.8,0,,,2012-05-05 12:17,2012-05-16 14:02,admin,admin
501,129951,3769,19983,1191,1,100,N,N,N,CP_Drtn,TT_Task,DT_FixedDUR2,RV_OK,TK_Complete,C-2-220,Water proofing membrane,3780,,,0,15,0,15,56,0,0,0,,2012-04-26 00:00,2012-05-02 00:00,,,,,,,,2012-04-30 08:00,2012-05-06 16:00,,,,,PT_Normal,,,,,BdraeoQCzkC7YPjHZ+MsIQ,ou/gz0gcP0y/c0+SOAEODA,,,N,15,0,,,2012-05-05 12:17,2012-05-16 14:02,admin,admin
502,129952,3769,19983,1191,1,0,N,N,N,CP_Drtn,TT_Task,DT_FixedDUR2,RV_OK,TK_NotStart,C-2-240,Heat insulation,3780,424,0,40,0,7,7,40,0,0,0,,,,2012-09-29 08:00,2012-10-03 16:00,,2012-07-29 08:00,2012-08-02 16:00,2012-07-29 08:00,2012-08-02 16:00,2012-07-29 08:00,2012-08-02 16:00,,2012-09-29 08:00,2012-10-03 16:00,,PT_Normal,,,,,bVJ9qM0an0i0dER304gyDw,ptYf/g4mRUKF2MeRQhhnKw,,,N,0,0,,,2012-05-05 12:17,2012-05-16 14:02,admin,admin
503,129953,3769,19932,1191,1,100,N,N,N,CP_Drtn,TT_Task,DT_FixedDUR2,RV_OK,TK_Complete,C-2-10,P.C  footings formwork,3777,,,0,39,0,39,40,0,0,0,,2012-03-18 00:00,2012-03-18 00:00,,,,,,,,2012-04-01 08:00,2012-04-05 16:00,,,,,PT_Normal,,,,,ZKRvjgl6RU2X4j1BFan20g,TUv6NU26n0GtcgJrPKBB7Q,,,N,39,0,,,2012-05-05 12:17,2012-05-16 14:02,admin,admin
504,129954,3769,19983,1191,1,0,N,N,N,CP_Drtn,TT_Task,DT_FixedDUR2,RV_OK,TK_NotStart,C-2-260,Slopped plain concrete,3779,424,0,56,0,10,10,56,0,0,0,,,,2012-10-06 08:00,2012-10-13 16:00,,2012-08-05 08:00,2012-08-12 16:00,2012-08-05 08:00,2012-08-12 16:00,2012-08-05 08:00,2012-08-12 16:00,,2012-10-06 08:00,2012-10-13 16:00,,PT_Normal,,,,,XjDeyvCroUuZvfj0VwGZ0Q,Z4gxUxfxj0WvVv2B4lsRhg,,,N,0,0,,,2012-05-05 12:17,2012-05-16 14:02,admin,admin
505,129955,3769,19966,1191,1,100,N,N,N,CP_Drtn,TT_Task,DT_FixedDUR2,RV_OK,TK_Complete,C-2-270,Removing form work,3777,,,0,8,0,8,40,0,0,0,,2012-04-24 00:00,2012-04-28 00:00,,,,,,,,2012-05-07 08:00,2012-05-11 16:00,,,,,PT_Normal,,,,,vcJE8VXxhE+22O3rjJqNaQ,ORTfhIQuE0q0XR0N5lCJag,,,N,8,0,,,2012-05-05 12:17,2012-05-16 14:02,admin,admin
506,129956,3769,19932,1191,1,100,N,N,N,CP_Drtn,TT_Task,DT_FixedDUR2,RV_OK,TK_Complete,C-2-90,R.C footings Pouring works,3779,,,0,7,0,7,8,0,0,0,,2012-03-29 00:00,2012-03-29 00:00,,,,,,,,2012-04-29 08:00,2012-04-29 16:00,,,,,PT_Normal,,,,,mdGGFx8OyU6EjAxZxphZqA,XTCLNE1avECXV3Dh11bjMA,,,N,7,0,,,2012-05-05 12:17,2012-05-16 14:02,admin,admin
507,129957,3769,19932,1191,1,100,N,N,N,CP_Drtn,TT_Task,DT_FixedDUR2,RV_OK,TK_Complete,C-2-60,R.C footings steel works,3778,,,0,58,0,58,56,0,0,0,,2012-03-25 00:00,2012-03-28 00:00,,,,,,,,2012-05-07 08:00,2012-05-13 16:00,,,,,PT_Normal,,,,,Ke0RsK7yOkSZZ3yDb6FBcA,tmqSQ6tsu0yfo2BGZxS2WA,,,N,58,0,,,2012-05-05 12:17,2012-05-16 14:02,admin,admin
508,129958,3769,19966,1191,1,100,N,N,N,CP_Drtn,TT_Task,DT_FixedDUR2,RV_OK,TK_Complete,C-2-150,Columns&walls pouring works,3779,,,0,16,0,16,8,0,0,0,,2012-04-10 00:00,2012-04-10 00:00,,,,,,,,2012-05-22 08:00,2012-05-22 16:00,,,,,PT_Normal,,,,,VYXc0HKNS0awJtFXhqhvBg,FzZMGSzOH065JgZUollrdA,,,N,16,0,,,2012-05-05 12:17,2012-05-16 14:02,admin,admin
509,129959,3769,19966,1191,1,100,N,N,N,CP_Drtn,TT_Task,DT_FixedDUR2,RV_OK,TK_Complete,C-2-120,Columns&walls Steel works,3778,,,0,72,0,72,56,0,0,0,,2012-04-06 00:00,2012-04-09 00:00,,,,,,,,2012-05-10 08:00,2012-05-16 16:00,,,,,PT_Normal,,,,,w+qX6tVyS0aTJkeTRVo0tA,NWrN0hlKLE+ALHWEm5nYYQ,,,N,72,0,,,2012-05-05 12:17,2012-05-16 14:02,admin,admin
510,129960,3769,19966,1191,1,100,N,N,N,CP_Drtn,TT_Task,DT_FixedDUR2,RV_OK,TK_Complete,C-2-180,Slab steel works,3778,,,0,123,0,123,40,0,0,0,,2012-04-18 00:00,2012-04-21 00:00,,,,,,,,2012-06-03 08:00,2012-06-07 16:00,,,,,PT_Normal,,,,,21FbXXqpfUa5rWbJEvKTIA,k4AT/1/o4USxSgjT5hnMOg,,,N,123,0,,,2012-05-05 12:17,2012-05-16 14:02,admin,admin
511,129961,3769,19966,1191,1,100,N,N,N,CP_Drtn,TT_Task,DT_FixedDUR2,RV_OK,TK_Complete,C-2-210,Slab Pouring works,3779,,,0,21,0,21,8,0,0,0,,2012-04-22 00:00,2012-04-22 00:00,,,,,,,,2012-07-12 08:00,2012-07-12 16:00,,,,,PT_Normal,,,,,cg4CVoxd9Ua+NguIy5/NCA,s+E5cG8XXEGoOMx7HeqK0g,,,N,21,0,,,2012-05-05 12:17,2012-05-16 14:02,admin,admin
512,129962,3769,19972,1191,1,100,N,N,N,CP_Drtn,TT_Task,DT_FixedDUR2,RV_OK,TK_Complete,C-3-40,R.C footings form work,3777,,,0,57,0,57,56,0,0,0,,2012-03-30 00:00,2012-04-04 00:00,,,,,,,,2012-04-29 08:00,2012-05-05 16:00,,,,,PT_Normal,,,,,oXnl723ks0uIjlcFsPN79w,jvdhJWJrqkiVJjP2saxibA,,,N,57,0,,,2012-05-05 12:17,2012-05-16 14:02,admin,admin
513,129963,3769,19970,1191,1,100,N,N,N,CP_Drtn,TT_Task,DT_FixedDUR2,RV_OK,TK_Complete,C-3-100,Columns&walls form works,3777,,,0,78,0,78,96,0,0,0,,2012-04-10 00:00,2012-04-13 00:00,,,,,,,,2012-04-29 08:00,2012-05-10 16:00,,,,,PT_Normal,,,,,usGzG9/cS0WQGLNUcExDbQ,WSESfDsy6kqLe9V+elhgcw,,,N,78,0,,,2012-05-05 12:17,2012-05-16 14:02,admin,admin
514,129964,3769,19970,1191,1,100,N,N,N,CP_Drtn,TT_Task,DT_FixedDUR2,RV_OK,TK_Complete,C-3-160,Slab form works,3777,,,0,130,0,130,72,0,0,0,,2012-04-19 00:00,2012-04-22 00:00,,,,,,,,2012-05-21 08:00,2012-05-29 16:00,,,,,PT_Normal,,,,,8+BkqX/FyE+rymp6Oc1zfg,NNopCSSPPkSexmjWWZIb5A,,,N,130,0,,,2012-05-05 12:17,2012-05-16 14:02,admin,admin
515,129965,3769,19933,1191,1,0,N,N,N,CP_Drtn,TT_Task,DT_FixedDUR2,RV_OK,TK_NotStart,C-3-280,Footing insulation,3780,912,0,64,0,9,9,64,0,0,0,,,,2012-10-06 08:00,2012-10-14 16:00,,2012-05-26 08:00,2012-06-03 16:00,2012-05-26 08:00,2012-06-03 16:00,2012-05-26 08:00,2012-06-03 16:00,,2012-10-06 08:00,2012-10-14 16:00,,PT_Normal,,,,,Y3ZcGTVorEeRHIK3+MxDAQ,x9vQe02ELkmO/QpEc9Gy7A,,,N,0,0,,,2012-05-05 12:17,2012-05-16 14:02,admin,admin
516,129966,3769,19933,1191,1,100,N,N,N,CP_Drtn,TT_Task,DT_FixedDUR2,RV_OK,TK_Complete,C-3-220,Water proofing membrane,3780,,,0,13,0,13,56,0,0,0,,2012-05-08 00:00,2012-05-13 00:00,,,,,,,,2012-05-15 08:00,2012-05-21 16:00,,,,,PT_Normal,,,,,f6jjKSetT06JZ0H/kwLDxA,ou/gz0gcP0y/c0+SOAEODA,,,N,13,0,,,2012-05-05 12:17,2012-05-16 14:02,admin,admin
517,129967,3769,19933,1191,1,0,N,N,N,CP_Drtn,TT_Task,DT_FixedDUR2,RV_OK,TK_NotStart,C-3-240,Heat insulation,3780,424,0,40,0,6,6,40,0,0,0,,,,2012-09-29 08:00,2012-10-03 16:00,,2012-07-29 08:00,2012-08-02 16:00,2012-07-29 08:00,2012-08-02 16:00,2012-07-29 08:00,2012-08-02 16:00,,2012-09-29 08:00,2012-10-03 16:00,,PT_Normal,,,,,AdFVcXKHAEKh0X2wV2cFLg,ptYf/g4mRUKF2MeRQhhnKw,,,N,0,0,,,2012-05-05 12:17,2012-05-16 14:02,admin,admin
518,129968,3769,19972,1191,1,100,N,N,N,CP_Drtn,TT_Task,DT_FixedDUR2,RV_OK,TK_Complete,C-3-10,P.C  footings formwork,3777,,,0,33,0,33,40,0,0,0,,2012-03-18 00:00,2012-03-18 00:00,,,,,,,,2012-04-01 08:00,2012-04-05 16:00,,,,,PT_Normal,,,,,b/UhAQbklkqOAtNzRGjGcA,TUv6NU26n0GtcgJrPKBB7Q,,,N,33,0,,,2012-05-05 12:17,2012-05-16 14:02,admin,admin
519,129969,3769,19933,1191,1,0,N,N,N,CP_Drtn,TT_Task,DT_FixedDUR2,RV_OK,TK_NotStart,C-3-260,Slopped plain concrete,3779,424,0,56,0,8,8,56,0,0,0,,,,2012-10-06 08:00,2012-10-13 16:00,,2012-08-05 08:00,2012-08-12 16:00,2012-08-05 08:00,2012-08-12 16:00,2012-08-05 08:00,2012-08-12 16:00,,2012-10-06 08:00,2012-10-13 16:00,,PT_Normal,,,,,Hd5EMGNzwk2wizPKdhJ1Ig,Z4gxUxfxj0WvVv2B4lsRhg,,,N,0,0,,,2012-05-05 12:17,2012-05-16 14:02,admin,admin
520,129970,3769,19970,1191,1,0,N,N,N,CP_Drtn,TT_Task,DT_FixedDUR2,RV_OK,TK_NotStart,C-3-270,Removing form work,3777,912,0,40,0,6,6,40,0,0,0,,,,2012-09-30 08:00,2012-10-04 16:00,,2012-05-20 08:00,2012-05-24 16:00,2012-05-20 08:00,2012-05-24 16:00,2012-05-20 08:00,2012-05-24 16:00,,2012-09-30 08:00,2012-10-04 16:00,,PT_Normal,,,,,Fk4vmuEfg0eFDkw8GY0+HA,ORTfhIQuE0q0XR0N5lCJag,,,N,0,0,,,2012-05-05 12:17,2012-05-16 14:02,admin,admin
521,129971,3769,19972,1191,1,100,N,N,N,CP_Drtn,TT_Task,DT_FixedDUR2,RV_OK,TK_Complete,C-3-90,R.C footings Pouring works,3779,,,0,6,0,6,8,0,0,0,,2012-04-09 00:00,2012-04-09 00:00,,,,,,,,2012-04-29 08:00,2012-04-29 16:00,,,,,PT_Normal,,,,,rbMCu2G6SE236t3mEXFriQ,XTCLNE1avECXV3Dh11bjMA,,,N,6,0,,,2012-05-05 12:17,2012-05-16 14:02,admin,admin
522,129972,3769,19972,1191,1,100,N,N,N,CP_Drtn,TT_Task,DT_FixedDUR2,RV_OK,TK_Complete,C-3-60,R.C footings steel works,3778,,,0,48,0,48,56,0,0,0,,2012-04-05 00:00,2012-04-08 00:00,,,,,,,,2012-05-07 08:00,2012-05-13 16:00,,,,,PT_Normal,,,,,OBeocEtnzkKfSLqa0BcUGQ,tmqSQ6tsu0yfo2BGZxS2WA,,,N,48,0,,,2012-05-05 12:17,2012-05-16 14:02,admin,admin
523,129973,3769,19970,1191,1,100,N,N,N,CP_Drtn,TT_Task,DT_FixedDUR2,RV_OK,TK_Complete,C-3-150,Columns&walls pouring works,3779,,,0,13,0,13,8,0,0,0,,2012-04-18 00:00,2012-04-18 00:00,,,,,,,,2012-05-20 08:00,2012-05-20 16:00,,,,,PT_Normal,,,,,0YC8m1BoMU+BV3J0o4ObSg,FzZMGSzOH065JgZUollrdA,,,N,13,0,,,2012-05-05 12:17,2012-05-16 14:02,admin,admin
524,129974,3769,19970,1191,1,100,N,N,N,CP_Drtn,TT_Task,DT_FixedDUR2,RV_OK,TK_Complete,C-3-120,Columns&walls Steel works,3778,,,0,60,0,60,48,0,0,0,,2012-04-13 00:00,2012-04-17 00:00,,,,,,,,2012-05-12 08:00,2012-05-17 16:00,,,,,PT_Normal,,,,,ggZOIrbQuUGpoMpkzFMqQw,NWrN0hlKLE+ALHWEm5nYYQ,,,N,60,0,,,2012-05-05 12:17,2012-05-16 14:02,admin,admin
525,129975,3769,19970,1191,1,100,N,N,N,CP_Drtn,TT_Task,DT_FixedDUR2,RV_OK,TK_Complete,C-3-180,Slab steel works,3778,,,0,103,0,103,40,0,0,0,,2012-04-23 00:00,2012-04-29 00:00,,,,,,,,2012-05-31 08:00,2012-06-04 16:00,,,,,PT_Normal,,,,,H7ikqSVlAkyC/duEMceJuQ,k4AT/1/o4USxSgjT5hnMOg,,,N,103,0,,,2012-05-05 12:17,2012-05-16 14:02,admin,admin
526,129976,3769,19970,1191,1,100,N,N,N,CP_Drtn,TT_Task,DT_FixedDUR2,RV_OK,TK_Complete,C-3-210,Slab Pouring works,3779,,,0,17,0,17,8,0,0,0,,2012-05-02 00:00,2012-05-02 00:00,,,,,,,,2012-04-30 08:00,2012-04-30 16:00,,,,,PT_Normal,,,,,ZzshStCmLUe2KT1bjw4YVw,s+E5cG8XXEGoOMx7HeqK0g,,,N,17,0,,,2012-05-05 12:17,2012-05-16 14:02,admin,admin
527,129977,3769,19987,1191,1,100,N,N,N,CP_Drtn,TT_Task,DT_FixedDUR2,RV_OK,TK_Complete,C-4-40,R.C footings form work,3777,,,0,40,0,40,56,0,0,0,,2012-03-19 00:00,2012-03-24 00:00,,,,,,,,2012-04-29 08:00,2012-05-05 16:00,,,,,PT_Normal,,,,,nI0+wFhK4EyPdXE/+ECIGQ,jvdhJWJrqkiVJjP2saxibA,,,N,40,0,,,2012-05-05 12:17,2012-05-16 14:02,admin,admin
528,129978,3769,19986,1191,1,100,N,N,N,CP_Drtn,TT_Task,DT_FixedDUR2,RV_OK,TK_Complete,C-4-100,Columns&walls form works,3777,,,0,54,0,54,96,0,0,0,,2012-03-30 00:00,2012-04-04 00:00,,,,,,,,2012-04-29 08:00,2012-05-10 16:00,,,,,PT_Normal,,,,,ergFli7Cz0uUq44XKVyb6Q,WSESfDsy6kqLe9V+elhgcw,,,N,54,0,,,2012-05-05 12:17,2012-05-16 14:02,admin,admin
529,129979,3769,19986,1191,1,100,N,N,N,CP_Drtn,TT_Task,DT_FixedDUR2,RV_OK,TK_Complete,C-4-160,Slab form works,3777,,,0,91,0,91,64,0,0,0,,2012-04-11 00:00,2012-04-16 00:00,,,,,,,,2012-06-16 08:00,2012-06-23 16:00,,,,,PT_Normal,,,,,7Aq8GNuQXE6myansLiSduw,NNopCSSPPkSexmjWWZIb5A,,,N,91,0,,,2012-05-05 12:17,2012-05-16 14:02,admin,admin
530,129980,3769,19984,1191,1,0,N,N,N,CP_Drtn,TT_Task,DT_FixedDUR2,RV_OK,TK_Active,C-4-280,Footing insulation,3780,1027.2,0,12.8,4.8,1.2,6,64,0,0,0,,2012-05-12 00:00,,2012-10-13 11:12,2012-10-14 16:00,,2012-05-16 08:00,2012-05-17 12:48,2012-05-16 08:00,2012-05-17 12:48,2012-05-15 08:00,2012-05-22 16:00,,2012-10-13 11:12,2012-10-14 16:00,,PT_Normal,,,,,ldkFU25uFEmD/TG/A7kAGg,x9vQe02ELkmO/QpEc9Gy7A,,,N,4.8,0,,,2012-05-05 12:17,2012-05-16 14:02,admin,admin
531,129981,3769,19984,1191,1,100,N,N,N,CP_Drtn,TT_Task,DT_FixedDUR2,RV_OK,TK_Complete,C-4-220,Water proofing membrane,3780,,,0,9,0,9,56,0,0,0,,2012-04-26 00:00,2012-05-02 00:00,,,,,,,,2012-05-09 08:00,2012-05-15 16:00,,,,,PT_Normal,,,,,iTT9hZA55EuF/EL2Gf73WQ,ou/gz0gcP0y/c0+SOAEODA,,,N,9,0,,,2012-05-05 12:17,2012-05-16 14:02,admin,admin
532,129982,3769,19984,1191,1,0,N,N,N,CP_Drtn,TT_Task,DT_FixedDUR2,RV_OK,TK_NotStart,C-4-240,Heat insulation,3780,424,0,40,0,4,4,40,0,0,0,,,,2012-09-29 08:00,2012-10-03 16:00,,2012-07-29 08:00,2012-08-02 16:00,2012-07-29 08:00,2012-08-02 16:00,2012-07-29 08:00,2012-08-02 16:00,,2012-09-29 08:00,2012-10-03 16:00,,PT_Normal,,,,,mDXeZ+yRUki28Ym5ohqRqQ,ptYf/g4mRUKF2MeRQhhnKw,,,N,0,0,,,2012-05-05 12:17,2012-05-16 14:02,admin,admin
533,129983,3769,19987,1191,1,100,N,N,N,CP_Drtn,TT_Task,DT_FixedDUR2,RV_OK,TK_Complete,C-4-10,P.C  footings formwork,3777,,,0,23,0,23,40,0,0,0,,2012-03-18 00:00,2012-03-18 00:00,,,,,,,,2012-04-01 08:00,2012-04-05 16:00,,,,,PT_Normal,,,,,vQmxyZzqaUKiMYPw4TfLtw,TUv6NU26n0GtcgJrPKBB7Q,,,N,23,0,,,2012-05-05 12:17,2012-05-16 14:02,admin,admin
534,129984,3769,19984,1191,1,0,N,N,N,CP_Drtn,TT_Task,DT_FixedDUR2,RV_OK,TK_NotStart,C-4-260,Slopped plain concrete,3779,424,0,56,0,6,6,56,0,0,0,,,,2012-10-06 08:00,2012-10-13 16:00,,2012-08-05 08:00,2012-08-12 16:00,2012-08-05 08:00,2012-08-12 16:00,2012-08-05 08:00,2012-08-12 16:00,,2012-10-06 08:00,2012-10-13 16:00,,PT_Normal,,,,,p89UEvJE9kafWvcjbIJopw,Z4gxUxfxj0WvVv2B4lsRhg,,,N,0,0,,,2012-05-05 12:17,2012-05-16 14:02,admin,admin
535,129985,3769,19986,1191,1,100,N,N,N,CP_Drtn,TT_Task,DT_FixedDUR2,RV_OK,TK_Complete,C-4-270,Removing form work,3777,,,0,5,0,5,40,0,0,0,,2012-04-23 00:00,2012-04-27 00:00,,,,,,,,2012-05-15 08:00,2012-05-19 16:00,,,,,PT_Normal,,,,,NfthPvRor0qOr3RmlkF6Gw,ORTfhIQuE0q0XR0N5lCJag,,,N,5,0,,,2012-05-05 12:17,2012-05-16 14:02,admin,admin
536,129986,3769,19987,1191,1,100,N,N,N,CP_Drtn,TT_Task,DT_FixedDUR2,RV_OK,TK_Complete,C-4-90,R.C footings Pouring works,3779,,,0,4,0,4,8,0,0,0,,2012-03-29 00:00,2012-03-29 00:00,,,,,,,,2012-04-29 08:00,2012-04-29 16:00,,,,,PT_Normal,,,,,gyi1qMGIe068Rqk/Yc3g7g,XTCLNE1avECXV3Dh11bjMA,,,N,4,0,,,2012-05-05 12:17,2012-05-16 14:02,admin,admin
537,129987,3769,19987,1191,1,100,N,N,N,CP_Drtn,TT_Task,DT_FixedDUR2,RV_OK,TK_Complete,C-4-60,R.C footings steel works,3778,,,0,34,0,34,56,0,0,0,,2012-03-25 00:00,2012-03-28 00:00,,,,,,,,2012-05-07 08:00,2012-05-13 16:00,,,,,PT_Normal,,,,,lvRdrVZ5gkeeUvkylRnXag,tmqSQ6tsu0yfo2BGZxS2WA,,,N,34,0,,,2012-05-05 12:17,2012-05-16 14:02,admin,admin
538,129988,3769,19986,1191,1,100,N,N,N,CP_Drtn,TT_Task,DT_FixedDUR2,RV_OK,TK_Complete,C-4-150,Columns&walls pouring works,3779,,,0,9,0,9,8,0,0,0,,2012-04-10 00:00,2012-04-10 00:00,,,,,,,,2012-05-20 08:00,2012-05-20 16:00,,,,,PT_Normal,,,,,uJTOM0bxHkWCX3781WzTGQ,FzZMGSzOH065JgZUollrdA,,,N,9,0,,,2012-05-05 12:17,2012-05-16 14:02,admin,admin
539,129989,3769,19986,1191,1,100,N,N,N,CP_Drtn,TT_Task,DT_FixedDUR2,RV_OK,TK_Complete,C-4-120,Columns&walls Steel works,3778,,,0,42,0,42,48,0,0,0,,2012-04-05 00:00,2012-04-09 00:00,,,,,,,,2012-05-12 08:00,2012-05-17 16:00,,,,,PT_Normal,,,,,E7+PGRgHg0yg668Gh3Z2hw,NWrN0hlKLE+ALHWEm5nYYQ,,,N,42,0,,,2012-05-05 12:17,2012-05-16 14:02,admin,admin
540,129990,3769,19986,1191,1,100,N,N,N,CP_Drtn,TT_Task,DT_FixedDUR2,RV_OK,TK_Complete,C-4-180,Slab steel works,3778,,,0,72,0,72,32,0,0,0,,2012-04-17 00:00,2012-04-20 00:00,,,,,,,,2012-06-25 08:00,2012-06-28 16:00,,,,,PT_Normal,,,,,Ek5LtOxLUU65T3nzXUpRPA,k4AT/1/o4USxSgjT5hnMOg,,,N,72,0,,,2012-05-05 12:17,2012-05-16 14:02,admin,admin
541,129991,3769,19986,1191,1,100,N,N,N,CP_Drtn,TT_Task,DT_FixedDUR2,RV_OK,TK_Complete,C-4-210,Slab Pouring works,3779,,,0,12,0,12,8,0,0,0,,2012-04-21 00:00,2012-04-21 00:00,,,,,,,,2012-07-01 08:00,2012-07-01 16:00,,,,,PT_Normal,,,,,+RBqnDyqaUSO7d0kN8PjkA,s+E5cG8XXEGoOMx7HeqK0g,,,N,12,0,,,2012-05-05 12:17,2012-05-16 14:02,admin,admin
542,129992,3769,19975,1191,1,100,N,N,N,CP_Drtn,TT_Task,DT_FixedDUR2,RV_OK,TK_Complete,C-5-40,R.C footings form work,3777,,,0,63,0,63,56,0,0,0,,2012-03-29 00:00,2012-04-03 00:00,,,,,,,,2012-04-29 08:00,2012-05-05 16:00,,,,,PT_Normal,,,,,cZeVD7yze0KPE++VffYhWg,jvdhJWJrqkiVJjP2saxibA,,,N,63,0,,,2012-05-05 12:17,2012-05-16 14:02,admin,admin
543,129993,3769,19978,1191,1,100,N,N,N,CP_Drtn,TT_Task,DT_FixedDUR2,RV_OK,TK_Complete,C-5-100,Columns&walls form works,3777,,,0,86,0,86,96,0,0,0,,2012-04-10 00:00,2012-04-15 00:00,,,,,,,,2012-04-29 08:00,2012-05-10 16:00,,,,,PT_Normal,,,,,JNXJN0mIykexaKd5LPEvdQ,WSESfDsy6kqLe9V+elhgcw,,,N,86,0,,,2012-05-05 12:17,2012-05-16 14:02,admin,admin
544,129994,3769,19978,1191,1,100,N,N,N,CP_Drtn,TT_Task,DT_FixedDUR2,RV_OK,TK_Complete,C-5-160,Slab form works,3777,,,0,143,0,143,72,0,0,0,,2012-04-23 00:00,2012-04-28 00:00,,,,,,,,2012-05-10 08:00,2012-05-18 16:00,,,,,PT_Normal,,,,,VbIvUiiirkWHWAHl6iX7XQ,NNopCSSPPkSexmjWWZIb5A,,,N,143,0,,,2012-05-05 12:17,2012-05-16 14:02,admin,admin
545,129995,3769,19941,1191,1,0,N,N,N,CP_Drtn,TT_Task,DT_FixedDUR2,RV_OK,TK_NotStart,C-5-280,Footing insulation,3780,812,0,64,0,10,10,64,0,0,0,,,,2012-10-06 08:00,2012-10-14 16:00,,2012-06-09 12:00,2012-06-18 12:00,2012-06-09 12:00,2012-06-18 12:00,2012-06-09 12:00,2012-06-18 12:00,,2012-10-06 08:00,2012-10-14 16:00,,PT_Normal,,,,,k9nqcvcF2USwpvXiwBBgYQ,x9vQe02ELkmO/QpEc9Gy7A,,,N,0,0,,,2012-05-05 12:17,2012-05-16 14:02,admin,admin
546,129996,3769,19941,1191,1,0,N,N,N,CP_Drtn,TT_Task,DT_FixedDUR2,RV_OK,TK_NotStart,C-5-220,Water proofing membrane,3780,860,0,56,0,14,14,56,0,0,0,,,,2012-09-19 08:00,2012-09-26 16:00,,2012-05-16 12:00,2012-05-24 12:00,2012-05-16 12:00,2012-05-24 12:00,2012-05-16 12:00,2012-05-24 12:00,,2012-09-19 08:00,2012-09-26 16:00,,PT_Normal,,,,,XxODnxVV9UmiBJW69Ooi+g,ou/gz0gcP0y/c0+SOAEODA,,,N,0,0,,,2012-05-05 12:17,2012-05-16 14:02,admin,admin
547,129997,3769,19941,1191,1,0,N,N,N,CP_Drtn,TT_Task,DT_FixedDUR2,RV_OK,TK_NotStart,C-5-240,Heat insulation,3780,424,0,40,0,6,6,40,0,0,0,,,,2012-09-29 08:00,2012-10-03 16:00,,2012-07-29 08:00,2012-08-02 16:00,2012-07-29 08:00,2012-08-02 16:00,2012-07-29 08:00,2012-08-02 16:00,,2012-09-29 08:00,2012-10-03 16:00,,PT_Normal,,,,,tyK4pxswaEuTRekkN52eNw,ptYf/g4mRUKF2MeRQhhnKw,,,N,0,0,,,2012-05-05 12:17,2012-05-16 14:02,admin,admin
548,129998,3769,19975,1191,1,100,N,N,N,CP_Drtn,TT_Task,DT_FixedDUR2,RV_OK,TK_Complete,C-5-10,P.C  footings formwork,3777,,,0,36,0,36,40,0,0,0,,2012-03-18 00:00,2012-03-18 00:00,,,,,,,,2012-04-01 08:00,2012-04-05 16:00,,,,,PT_Normal,,,,,vtUxo+gJm0OC17IojLjG1w,TUv6NU26n0GtcgJrPKBB7Q,,,N,36,0,,,2012-05-05 12:17,2012-05-16 14:02,admin,admin
549,129999,3769,19941,1191,1,0,N,N,N,CP_Drtn,TT_Task,DT_FixedDUR2,RV_OK,TK_NotStart,C-5-260,Slopped plain concrete,3779,424,0,56,0,9,9,56,0,0,0,,,,2012-10-06 08:00,2012-10-13 16:00,,2012-08-05 08:00,2012-08-12 16:00,2012-08-05 08:00,2012-08-12 16:00,2012-08-05 08:00,2012-08-12 16:00,,2012-10-06 08:00,2012-10-13 16:00,,PT_Normal,,,,,0qgU88lOYEGiSHuFJf5ywA,Z4gxUxfxj0WvVv2B4lsRhg,,,N,0,0,,,2012-05-05 12:17,2012-05-16 14:02,admin,admin
550,130000,3769,19978,1191,1,0,N,N,N,CP_Drtn,TT_Task,DT_FixedDUR2,RV_OK,TK_NotStart,C-5-270,Removing form work,3777,812,0,40,0,7,7,40,0,0,0,,,,2012-09-30 08:00,2012-10-04 16:00,,2012-06-03 12:00,2012-06-09 12:00,2012-06-03 12:00,2012-06-09 12:00,2012-06-03 12:00,2012-06-09 12:00,,2012-09-30 08:00,2012-10-04 16:00,,PT_Normal,,,,,CXPvSGtkL0OvyWeppiX+eA,ORTfhIQuE0q0XR0N5lCJag,,,N,0,0,,,2012-05-05 12:17,2012-05-16 14:02,admin,admin
551,130001,3769,19975,1191,1,100,N,N,N,CP_Drtn,TT_Task,DT_FixedDUR2,RV_OK,TK_Complete,C-5-90,R.C footings Pouring works,3779,,,0,6,0,6,8,0,0,0,,2012-04-08 00:00,2012-04-08 00:00,,,,,,,,2012-04-29 08:00,2012-04-29 16:00,,,,,PT_Normal,,,,,hniZrAx1PkyqJ52Yzsbh4A,XTCLNE1avECXV3Dh11bjMA,,,N,6,0,,,2012-05-05 12:17,2012-05-16 14:02,admin,admin
552,130002,3769,19975,1191,1,100,N,N,N,CP_Drtn,TT_Task,DT_FixedDUR2,RV_OK,TK_Complete,C-5-60,R.C footings steel works,3778,,,0,53,0,53,56,0,0,0,,2012-04-04 00:00,2012-04-07 00:00,,,,,,,,2012-05-07 08:00,2012-05-13 16:00,,,,,PT_Normal,,,,,+mRgMkgkLkK2YVRTZNYTbQ,tmqSQ6tsu0yfo2BGZxS2WA,,,N,53,0,,,2012-05-05 12:17,2012-05-16 14:02,admin,admin
553,130003,3769,19978,1191,1,100,N,N,N,CP_Drtn,TT_Task,DT_FixedDUR2,RV_OK,TK_Active,C-5-150,Columns&walls pouring works,3779,1046.4,1046.4,1.6,11.2,2.8,14,8,0,0,0,,2012-04-22 00:00,,2012-10-15 14:24,2012-10-15 16:00,,2012-05-16 08:00,2012-05-16 09:36,2012-05-16 08:00,2012-05-16 09:36,2012-05-20 08:00,2012-05-20 16:00,,2012-10-15 14:24,2012-10-15 16:00,,PT_Normal,,,,,zxkpzz6ZMU2oap/GTj4k8Q,FzZMGSzOH065JgZUollrdA,,,N,11.2,0,,,2012-05-05 12:17,2012-05-16 14:02,admin,admin
554,130004,3769,19978,1191,1,100,N,N,N,CP_Drtn,TT_Task,DT_FixedDUR2,RV_OK,TK_Complete,C-5-120,Columns&walls Steel works,3778,,,0,66,0,66,48,0,0,0,,2012-04-16 00:00,2012-04-20 00:00,,,,,,,,2012-05-12 08:00,2012-05-17 16:00,,,,,PT_Normal,,,,,Ckvb8rNJREyhUycdyItpIA,NWrN0hlKLE+ALHWEm5nYYQ,,,N,66,0,,,2012-05-05 12:17,2012-05-16 14:02,admin,admin
555,130005,3769,19978,1191,1,100,N,N,N,CP_Drtn,TT_Task,DT_FixedDUR2,RV_OK,TK_Complete,C-5-180,Slab steel works,3778,,,0,113,0,113,40,0,0,0,,2012-04-29 00:00,2012-05-01 00:00,,,,,,,,2012-05-20 08:00,2012-05-24 16:00,,,,,PT_Normal,,,,,My0q1H6vDU2CGxaniG+uqA,k4AT/1/o4USxSgjT5hnMOg,,,N,113,0,,,2012-05-05 12:17,2012-05-16 14:02,admin,admin
556,130006,3769,19978,1191,1,0,N,N,N,CP_Drtn,TT_Task,DT_FixedDUR2,RV_OK,TK_Active,C-5-210,Slab Pouring works,3779,812,0,4,9.5,9.5,19,8,0,0,0,,2012-05-01 00:00,,2012-09-11 12:00,2012-09-11 16:00,,2012-05-16 08:00,2012-05-16 12:00,2012-05-16 08:00,2012-05-16 12:00,2012-05-26 08:00,2012-05-26 16:00,,2012-09-11 12:00,2012-09-11 16:00,,PT_Normal,,,,,sODyedrMukmJHW5A0ND2bw,s+E5cG8XXEGoOMx7HeqK0g,,,N,9.5,0,,,2012-05-05 12:17,2012-05-16 14:02,admin,admin
557,130007,3769,20024,3746,1,0,N,N,N,CP_Drtn,TT_Task,DT_FixedDUR2,RV_OK,TK_NotStart,H-12-40,R.C footings form work,,24,0,64,0,0,0,64,0,0,0,,,,2012-06-04 08:00,2012-06-11 16:00,,2012-06-01 08:00,2012-06-08 16:00,2012-06-01 08:00,2012-06-08 16:00,2012-06-01 08:00,2012-06-08 16:00,,2012-06-04 08:00,2012-06-11 16:00,,PT_Normal,,,,,+oEDfB5TUkul1fMsJT6AUw,pI5YX2z4R0G8sUa4oXL2sQ,,,N,0,0,,,2012-05-05 12:17,2012-05-16 14:02,admin,admin
558,130008,3769,20025,3746,1,0,N,N,N,CP_Drtn,TT_Task,DT_FixedDUR2,RV_OK,TK_NotStart,H-12-240,Columns form works,,24,0,32,0,0,0,32,0,0,0,,,,2012-07-19 08:00,2012-07-22 16:00,,2012-07-16 08:00,2012-07-19 16:00,2012-07-16 08:00,2012-07-19 16:00,2012-07-16 08:00,2012-07-19 16:00,,2012-07-19 08:00,2012-07-22 16:00,,PT_Normal,,,,,g+Up9Y+uc02q/OqPVwoEig,ZNxJohhQ0kig/lH/L0DlNA,,,N,0,0,,,2012-05-05 12:17,2012-05-16 14:02,admin,admin
559,130009,3769,20025,3746,1,0,N,N,N,CP_Drtn,TT_Task,DT_FixedDUR2,RV_OK,TK_NotStart,H-12-300,Slab form works,,24,0,80,0,0,0,80,0,0,0,,,,2012-07-29 08:00,2012-08-07 16:00,,2012-07-26 08:00,2012-08-04 16:00,2012-07-26 08:00,2012-08-04 16:00,2012-07-26 08:00,2012-08-04 16:00,,2012-07-29 08:00,2012-08-07 16:00,,PT_Normal,,,,,ARkTE+MZzEie7/nGtpvV+w,+gwC3XvkS0Sgo6GLcekxqA,,,N,0,0,,,2012-05-05 12:17,2012-05-16 14:02,admin,admin
560,130010,3769,20026,3746,1,0,N,N,N,CP_Drtn,TT_Task,DT_FixedDUR2,RV_OK,TK_NotStart,H-12-360,Columns form works,,24,0,32,0,0,0,32,0,0,0,,,,2012-08-15 08:00,2012-08-18 16:00,,2012-08-12 08:00,2012-08-15 16:00,2012-08-12 08:00,2012-08-15 16:00,2012-08-12 08:00,2012-08-15 16:00,,2012-08-15 08:00,2012-08-18 16:00,,PT_Normal,,,,,1Buwb3wddkaBOcnbjg8WxQ,yM6AWXiM8EeF4M6wL9YRBg,,,N,0,0,,,2012-05-05 12:17,2012-05-16 14:02,admin,admin
561,130011,3769,20026,3746,1,0,N,N,N,CP_Drtn,TT_Task,DT_FixedDUR2,RV_OK,TK_NotStart,H-12-430,Slab form works,,24,0,56,0,0,0,56,0,0,0,,,,2012-08-25 08:00,2012-08-31 16:00,,2012-08-22 08:00,2012-08-28 16:00,2012-08-22 08:00,2012-08-28 16:00,2012-08-22 08:00,2012-08-28 16:00,,2012-08-25 08:00,2012-08-31 16:00,,PT_Normal,,,,,ZONjQgcuU0CspyyAbj88eQ,eUmZ5ZkllU65T/nqcI1pdQ,,,N,0,0,,,2012-05-05 12:17,2012-05-16 14:02,admin,admin
562,130012,3769,20027,3746,1,0,N,N,N,CP_Drtn,TT_Task,DT_FixedDUR2,RV_OK,TK_NotStart,H-12-520,Columns form works,,24,0,40,0,0,0,40,0,0,0,,,,2012-09-08 08:00,2012-09-12 16:00,,2012-09-05 08:00,2012-09-09 16:00,2012-09-05 08:00,2012-09-09 16:00,2012-09-05 08:00,2012-09-09 16:00,,2012-09-08 08:00,2012-09-12 16:00,,PT_Normal,,,,,fezdbkTTjEyjZUGN0632SA,iWO+P2EnB0a/PHSeVSUlPA,,,N,0,0,,,2012-05-05 12:17,2012-05-16 14:02,admin,admin
563,130013,3769,20027,3746,1,0,N,N,N,CP_Drtn,TT_Task,DT_FixedDUR2,RV_OK,TK_NotStart,H-12-590,Slab form works,,24,0,56,0,0,0,56,0,0,0,,,,2012-09-19 08:00,2012-09-25 16:00,,2012-09-16 08:00,2012-09-22 16:00,2012-09-16 08:00,2012-09-22 16:00,2012-09-16 08:00,2012-09-22 16:00,,2012-09-19 08:00,2012-09-25 16:00,,PT_Normal,,,,,lVrnVfsb6EajCnBrnXhJAg,Oz+YL2zHMk+k+YZGY/Un2w,,,N,0,0,,,2012-05-05 12:17,2012-05-16 14:02,admin,admin
564,130014,3769,19949,3746,1,0,N,N,N,CP_Drtn,TT_Task,DT_FixedDUR2,RV_OK,TK_NotStart,H-12-390,Footing insulation,,280,0,56,0,0,0,56,0,0,0,,,,2012-09-24 08:00,2012-09-30 16:00,,2012-08-20 08:00,2012-08-26 16:00,2012-08-20 08:00,2012-08-26 16:00,2012-08-20 08:00,2012-08-26 16:00,,2012-09-24 08:00,2012-09-30 16:00,,PT_Normal,,,,,qi+LJDNTkEukPGhTCRMggQ,mt0MUnseVkiE5PyRXG/wQg,,,N,0,0,,,2012-05-05 12:17,2012-05-16 14:02,admin,admin
565,130015,3769,19949,3746,1,0,N,N,N,CP_Drtn,TT_Task,DT_FixedDUR2,RV_OK,TK_NotStart,H-12-650,Water proofing membrane,,24,0,24,0,0,0,24,0,0,0,,,,2012-10-03 08:00,2012-10-05 16:00,,2012-09-30 08:00,2012-10-02 16:00,2012-09-30 08:00,2012-10-02 16:00,2012-09-30 08:00,2012-10-02 16:00,,2012-10-03 08:00,2012-10-05 16:00,,PT_Normal,,,,,x3CqsCaszUqNSOzFox/9bg,kbz1uXPQU0KVAg15ehHgQg,,,N,0,0,,,2012-05-05 12:17,2012-05-16 14:02,admin,admin
566,130016,3769,19949,3746,1,0,N,N,N,CP_Drtn,TT_Task,DT_FixedDUR2,RV_OK,TK_NotStart,H-12-670,Heat insulation,,24,0,24,0,0,0,24,0,0,0,,,,2012-10-07 08:00,2012-10-09 16:00,,2012-10-04 08:00,2012-10-06 16:00,2012-10-04 08:00,2012-10-06 16:00,2012-10-04 08:00,2012-10-06 16:00,,2012-10-07 08:00,2012-10-09 16:00,,PT_Normal,,,,,wuvoPl0ytEKa82a1fQ6X0Q,C1iHtNVbN0+F7KSL2eeqgg,,,N,0,0,,,2012-05-05 12:17,2012-05-16 14:02,admin,admin
567,130017,3769,19959,3746,1,100,N,N,N,CP_Drtn,TT_Task,DT_FixedDUR2,RV_OK,TK_Complete,H-12-10,P.C  footings formwork,,,,0,0,0,0,40,0,0,0,,2012-05-11 00:00,2012-05-14 00:00,,,,,,,,2012-05-15 08:00,2012-05-19 16:00,,,,,PT_Normal,,,,,aWyO5SyziU6LpqGjVOd+Lw,QkJM3ZPVqEGwSmfvMqX1DQ,,,N,0,0,,,2012-05-05 12:17,2012-05-16 14:02,admin,admin
568,130018,3769,19959,3746,1,0,N,N,N,CP_Drtn,TT_Task,DT_FixedDUR2,RV_OK,TK_NotStart,H-12-460,Slab on grade work,,280,0,40,0,0,0,40,0,0,0,,,,2012-10-09 08:00,2012-10-13 16:00,,2012-09-04 08:00,2012-09-08 16:00,2012-09-04 08:00,2012-09-08 16:00,2012-09-04 08:00,2012-09-08 16:00,,2012-10-09 08:00,2012-10-13 16:00,,PT_Normal,,,,,FF5+SFBRSkyBXVWqdCooHA,VZ2fPoqzH0aV/YokfJGCKA,,,N,0,0,,,2012-05-05 12:17,2012-05-16 14:02,admin,admin
569,130019,3769,19949,3746,1,0,N,N,N,CP_Drtn,TT_Task,DT_FixedDUR2,RV_OK,TK_NotStart,H-12-690,Slopped plain concrete,,24,0,24,0,0,0,24,0,0,0,,,,2012-10-11 08:00,2012-10-13 16:00,,2012-10-08 08:00,2012-10-10 16:00,2012-10-08 08:00,2012-10-10 16:00,2012-10-08 08:00,2012-10-10 16:00,,2012-10-11 08:00,2012-10-13 16:00,,PT_Normal,,,,,uoeXEdxcmU6mIxTdozhkhQ,32HKISWPeEefuKpoZggc7g,,,N,0,0,,,2012-05-05 12:17,2012-05-16 14:02,admin,admin
570,130020,3769,20025,3746,1,0,N,N,N,CP_Drtn,TT_Task,DT_FixedDUR2,RV_OK,TK_NotStart,H-12-290,Columns Pouring works,,24,0,8,0,0,0,8,0,0,0,,,,2012-07-28 08:00,2012-07-28 16:00,,2012-07-25 08:00,2012-07-25 16:00,2012-07-25 08:00,2012-07-25 16:00,2012-07-25 08:00,2012-07-25 16:00,,2012-07-28 08:00,2012-07-28 16:00,,PT_Normal,,,,,NyLzOTbXvUWs9CTsRR+5cg,d/ckyV+g4UKXOgwhJQnHTw,,,N,0,0,,,2012-05-05 12:17,2012-05-16 14:02,admin,admin
571,130021,3769,20025,3746,1,0,N,N,N,CP_Drtn,TT_Task,DT_FixedDUR2,RV_OK,TK_NotStart,H-12-260,Columns Steel works,,24,0,24,0,0,0,24,0,0,0,,,,2012-07-24 08:00,2012-07-26 16:00,,2012-07-21 08:00,2012-07-23 16:00,2012-07-21 08:00,2012-07-23 16:00,2012-07-21 08:00,2012-07-23 16:00,,2012-07-24 08:00,2012-07-26 16:00,,PT_Normal,,,,,nsfrkZf1uku5Bj75HtKgDg,uPz+qTQKd02Fj4tAzvrhbA,,,N,0,0,,,2012-05-05 12:17,2012-05-16 14:02,admin,admin
572,130022,3769,20026,3746,1,0,N,N,N,CP_Drtn,TT_Task,DT_FixedDUR2,RV_OK,TK_NotStart,H-12-420,Columns Pouring works,,24,0,8,0,0,0,8,0,0,0,,,,2012-08-24 08:00,2012-08-24 16:00,,2012-08-21 08:00,2012-08-21 16:00,2012-08-21 08:00,2012-08-21 16:00,2012-08-21 08:00,2012-08-21 16:00,,2012-08-24 08:00,2012-08-24 16:00,,PT_Normal,,,,,uIswmRiNlE688pQhMYqlEA,Pc5hcNIehkCeZBcH2atIQw,,,N,0,0,,,2012-05-05 12:17,2012-05-16 14:02,admin,admin
573,130023,3769,20026,3746,1,0,N,N,N,CP_Drtn,TT_Task,DT_FixedDUR2,RV_OK,TK_NotStart,H-12-380,Columns Steel works,,24,0,24,0,0,0,24,0,0,0,,,,2012-08-20 08:00,2012-08-22 16:00,,2012-08-17 08:00,2012-08-19 16:00,2012-08-17 08:00,2012-08-19 16:00,2012-08-17 08:00,2012-08-19 16:00,,2012-08-20 08:00,2012-08-22 16:00,,PT_Normal,,,,,X3W67KQ/HES179b88VF7+g,NBZOAeSUoEqQsGX27leNvg,,,N,0,0,,,2012-05-05 12:17,2012-05-16 14:02,admin,admin
574,130024,3769,20027,3746,1,0,N,N,N,CP_Drtn,TT_Task,DT_FixedDUR2,RV_OK,TK_NotStart,H-12-580,Columns Pouring works,,24,0,8,0,0,0,8,0,0,0,,,,2012-09-18 08:00,2012-09-18 16:00,,2012-09-15 08:00,2012-09-15 16:00,2012-09-15 08:00,2012-09-15 16:00,2012-09-15 08:00,2012-09-15 16:00,,2012-09-18 08:00,2012-09-18 16:00,,PT_Normal,,,,,gJ9OQq9FOUCBEqv3G2UzEA,rDyH+TIPqkeCTadjVud1Bg,,,N,0,0,,,2012-05-05 12:17,2012-05-16 14:02,admin,admin
575,130025,3769,20027,3746,1,0,N,N,N,CP_Drtn,TT_Task,DT_FixedDUR2,RV_OK,TK_NotStart,H-12-550,Columns Steel works,,24,0,24,0,0,0,24,0,0,0,,,,2012-09-14 08:00,2012-09-16 16:00,,2012-09-11 08:00,2012-09-13 16:00,2012-09-11 08:00,2012-09-13 16:00,2012-09-11 08:00,2012-09-13 16:00,,2012-09-14 08:00,2012-09-16 16:00,,PT_Normal,,,,,dTyZePn9zEGDk1Mbjpv1Xw,0+bvzzEmR0WL5KNVKXS8tA,,,N,0,0,,,2012-05-05 12:17,2012-05-16 14:02,admin,admin
576,130026,3769,20025,3746,1,0,N,N,N,CP_Drtn,TT_Task,DT_FixedDUR2,RV_OK,TK_NotStart,H-12-320,Slab steel works,,24,0,32,0,0,0,32,0,0,0,,,,2012-08-09 08:00,2012-08-12 16:00,,2012-08-06 08:00,2012-08-09 16:00,2012-08-06 08:00,2012-08-09 16:00,2012-08-06 08:00,2012-08-09 16:00,,2012-08-09 08:00,2012-08-12 16:00,,PT_Normal,,,,,6PzYsDtej0qknZBlD1UCJw,IrTGOfYwWU2jVKb8VeGwkw,,,N,0,0,,,2012-05-05 12:17,2012-05-16 14:02,admin,admin
577,130027,3769,20025,3746,1,0,N,N,N,CP_Drtn,TT_Task,DT_FixedDUR2,RV_OK,TK_NotStart,H-12-350,Slab Pouring works,,24,0,8,0,0,0,8,0,0,0,,,,2012-08-14 08:00,2012-08-14 16:00,,2012-08-11 08:00,2012-08-11 16:00,2012-08-11 08:00,2012-08-11 16:00,2012-08-11 08:00,2012-08-11 16:00,,2012-08-14 08:00,2012-08-14 16:00,,PT_Normal,,,,,Cz//YGtqNEmwDKMoME9BCA,skf+OFfbMUaZgqmDXZjpeg,,,N,0,0,,,2012-05-05 12:17,2012-05-16 14:02,admin,admin
578,130028,3769,20026,3746,1,0,N,N,N,CP_Drtn,TT_Task,DT_FixedDUR2,RV_OK,TK_NotStart,H-12-470,Slab steel works,,24,0,32,0,0,0,32,0,0,0,,,,2012-09-02 08:00,2012-09-05 16:00,,2012-08-30 08:00,2012-09-02 16:00,2012-08-30 08:00,2012-09-02 16:00,2012-08-30 08:00,2012-09-02 16:00,,2012-09-02 08:00,2012-09-05 16:00,,PT_Normal,,,,,45cckGfNeUqM4+ee3tcD9g,nVm+OMWdtU+cNV/6iEVSTQ,,,N,0,0,,,2012-05-05 12:17,2012-05-16 14:02,admin,admin
579,130029,3769,20026,3746,1,0,N,N,N,CP_Drtn,TT_Task,DT_FixedDUR2,RV_OK,TK_NotStart,H-12-500,Slab Pouring works,,24,0,8,0,0,0,8,0,0,0,,,,2012-09-07 08:00,2012-09-07 16:00,,2012-09-04 08:00,2012-09-04 16:00,2012-09-04 08:00,2012-09-04 16:00,2012-09-04 08:00,2012-09-04 16:00,,2012-09-07 08:00,2012-09-07 16:00,,PT_Normal,,,,,FKSaM79PZ0CItTjKVEvxiA,lzLmH/i+a0yBQOSzcxFThA,,,N,0,0,,,2012-05-05 12:17,2012-05-16 14:02,admin,admin
580,130030,3769,20027,3746,1,0,N,N,N,CP_Drtn,TT_Task,DT_FixedDUR2,RV_OK,TK_NotStart,H-12-610,Slab steel works,,24,0,32,0,0,0,32,0,0,0,,,,2012-09-27 08:00,2012-09-30 16:00,,2012-09-24 08:00,2012-09-27 16:00,2012-09-24 08:00,2012-09-27 16:00,2012-09-24 08:00,2012-09-27 16:00,,2012-09-27 08:00,2012-09-30 16:00,,PT_Normal,,,,,3ugIcBY950WvU0HaCSGMNg,RclEthIV+keLPY0fAE7HhA,,,N,0,0,,,2012-05-05 12:17,2012-05-16 14:02,admin,admin
581,130031,3769,20027,3746,1,0,N,N,N,CP_Drtn,TT_Task,DT_FixedDUR2,RV_OK,TK_NotStart,H-12-640,Slab Pouring works,,24,0,8,0,0,0,8,0,0,0,,,,2012-10-02 08:00,2012-10-02 16:00,,2012-09-29 08:00,2012-09-29 16:00,2012-09-29 08:00,2012-09-29 16:00,2012-09-29 08:00,2012-09-29 16:00,,2012-10-02 08:00,2012-10-02 16:00,,PT_Normal,,,,,rV5d0dwm7US8pxnGjvJAgg,v3XOYaKxRU2RLXTxEkl+fg,,,N,0,0,,,2012-05-05 12:17,2012-05-16 14:02,admin,admin
582,130032,3769,20024,3746,1,0,N,N,N,CP_Drtn,TT_Task,DT_FixedDUR2,RV_OK,TK_NotStart,H-12-90,R.C footings Pouring works,,24,0,8,0,0,0,8,0,0,0,,,,2012-06-21 08:00,2012-06-21 16:00,,2012-06-18 08:00,2012-06-18 16:00,2012-06-18 08:00,2012-06-18 16:00,2012-06-18 08:00,2012-06-18 16:00,,2012-06-21 08:00,2012-06-21 16:00,,PT_Normal,,,,,mNnwGLggd0uuQPzUhB/Gxg,XsT38gA9BUuLuLLIL1B1PA,,,N,0,0,,,2012-05-05 12:17,2012-05-16 14:02,admin,admin
583,130033,3769,20024,3746,1,0,N,N,N,CP_Drtn,TT_Task,DT_FixedDUR2,RV_OK,TK_NotStart,H-12-60,R.C footings steel works,,24,0,56,0,0,0,56,0,0,0,,,,2012-06-13 08:00,2012-06-19 16:00,,2012-06-10 08:00,2012-06-16 16:00,2012-06-10 08:00,2012-06-16 16:00,2012-06-10 08:00,2012-06-16 16:00,,2012-06-13 08:00,2012-06-19 16:00,,PT_Normal,,,,,IFdxJw8bIkyK3fvBImRrpw,YM+zIR85jkSOUX2kJkq1Zg,,,N,0,0,,,2012-05-05 12:17,2012-05-16 14:02,admin,admin
584,130034,3769,19975,1191,1,100,N,N,N,CP_Drtn,TT_Task,DT_FixedDUR2,RV_OK,TK_Complete,C-5-30,P.C  footings concrete pouring,3779,,,0,10,0,10,8,0,0,0,,2012-03-18 00:00,2012-03-18 00:00,,,,,,,,2012-04-09 08:00,2012-04-09 16:00,,,,,PT_Normal,,,,,V7PCudcz+EiRhiYM+8Lm2g,,,,N,10,0,,,2012-05-05 12:17,2012-05-16 14:02,admin,admin
585,130035,3769,19975,1191,1,100,N,N,N,CP_Drtn,TT_Task,DT_FixedDUR2,RV_OK,TK_Complete,C-5-20,Engineer Release Pouring,,,,0,0,0,0,8,0,0,0,,2012-03-18 00:00,2012-03-18 00:00,,,,,,,,2012-04-08 08:00,2012-04-08 16:00,,,,,PT_Normal,,,,,R+c39sa/dUemq84YhrA3Yg,,,,N,0,0,,,2012-05-05 12:17,2012-05-16 14:02,admin,admin
586,130036,3769,19987,1191,1,100,N,N,N,CP_Drtn,TT_Task,DT_FixedDUR2,RV_OK,TK_Complete,C-4-20,Engineer Release Pouring,,,,0,0,0,0,8,0,0,0,,2012-03-18 00:00,2012-03-18 00:00,,,,,,,,2012-04-08 08:00,2012-04-08 16:00,,,,,PT_Normal,,,,,0ym/BEOH1kSXlBK0CtI3yg,,,,N,0,0,,,2012-05-05 12:17,2012-05-16 14:02,admin,admin
587,130037,3769,19987,1191,1,100,N,N,N,CP_Drtn,TT_Task,DT_FixedDUR2,RV_OK,TK_Complete,C-4-30,P.C  footings concrete pouring,3779,,,0,6,0,6,8,0,0,0,,2012-03-18 00:00,2012-03-18 00:00,,,,,,,,2012-04-09 08:00,2012-04-09 16:00,,,,,PT_Normal,,,,,wXuIGK8rOEWzUK0wQ8Icvg,,,,N,6,0,,,2012-05-05 12:17,2012-05-16 14:02,admin,admin
588,130038,3769,19972,1191,1,100,N,N,N,CP_Drtn,TT_Task,DT_FixedDUR2,RV_OK,TK_Complete,C-3-20,Engineer Release Pouring,,,,0,0,0,0,8,0,0,0,,2012-03-18 00:00,2012-03-18 00:00,,,,,,,,2012-04-08 08:00,2012-04-08 16:00,,,,,PT_Normal,,,,,xPPlChMi5kSmRJeO0wEDsw,,,,N,0,0,,,2012-05-05 12:17,2012-05-16 14:02,admin,admin
589,130039,3769,19932,1191,1,100,N,N,N,CP_Drtn,TT_Task,DT_FixedDUR2,RV_OK,TK_Complete,C-2-20,Engineer Release Pouring,,,,0,0,0,0,8,0,0,0,,2012-03-18 00:00,2012-03-18 00:00,,,,,,,,2012-04-08 08:00,2012-04-08 16:00,,,,,PT_Normal,,,,,lBDd7qeYxU6CFc0FtNhK3A,,,,N,0,0,,,2012-05-05 12:17,2012-05-16 14:02,admin,admin
590,130040,3769,19982,1191,1,100,N,N,N,CP_Drtn,TT_Task,DT_FixedDUR2,RV_OK,TK_Complete,C-1-20,Engineer Release Pouring,,,,0,0,0,0,8,0,0,0,,2012-03-18 00:00,2012-03-18 00:00,,,,,,,,2012-04-08 08:00,2012-04-08 16:00,,,,,PT_Normal,,,,,qosQvwNFM0irRZ824LF0+g,,,,N,0,0,,,2012-05-05 12:17,2012-05-16 14:02,admin,admin
591,130041,3769,19959,3746,1,100,N,N,N,CP_Drtn,TT_Task,DT_FixedDUR2,RV_OK,TK_Complete,H-12-20,Engineer Release Pouring,,,,0,0,0,0,8,0,0,0,,2012-05-14 00:00,2012-05-14 00:00,,,,,,,,2012-05-20 08:00,2012-05-20 16:00,,,,,PT_Normal,,,,,JzBfiMou1EqpJH1EuL9ZLQ,,,,N,0,0,,,2012-05-05 12:17,2012-05-16 14:02,admin,admin
592,130042,3769,19973,3746,1,100,N,N,N,CP_Drtn,TT_Task,DT_FixedDUR2,RV_OK,TK_Complete,H-11-20,Engineer Release Pouring,,,,0,0,0,0,8,0,0,0,,2012-04-14 00:00,2012-04-14 00:00,,,,,,,,2012-06-17 08:00,2012-06-17 16:00,,,,,PT_Normal,,,,,9F2PQzccRUamDLIleOeQLg,,,,N,0,0,,,2012-05-05 12:17,2012-05-16 14:02,admin,admin
593,130043,3769,19965,3746,1,100,N,N,N,CP_Drtn,TT_Task,DT_FixedDUR2,RV_OK,TK_Complete,H-10-20,Engineer Release Pouring,,,,0,0,0,0,8,0,0,0,,2012-03-21 00:00,2012-03-21 00:00,,,,,,,,2012-04-28 08:00,2012-04-28 16:00,,,,,PT_Normal,,,,,FJwy4zgSpUaeaIcEjqjZ7w,,,,N,0,0,,,2012-05-05 12:17,2012-05-16 14:02,admin,admin
594,130044,3769,19979,3746,1,100,N,N,N,CP_Drtn,TT_Task,DT_FixedDUR2,RV_OK,TK_Complete,H-9-20,Engineer Release Pouring,,,,0,0,0,0,8,0,0,0,,2012-04-02 00:00,2012-04-02 00:00,,,,,,,,2012-05-11 08:00,2012-05-11 16:00,,,,,PT_Normal,,,,,p32dta40H02bnGYOjysi/A,,,,N,0,0,,,2012-05-05 12:17,2012-05-16 14:02,admin,admin
595,130045,3769,19971,3746,1,100,N,N,N,CP_Drtn,TT_Task,DT_FixedDUR2,RV_OK,TK_Complete,H-8-20,Engineer Release Pouring,,,,0,0,0,0,8,0,0,0,,2012-04-02 00:00,2012-04-02 00:00,,,,,,,,2012-05-11 08:00,2012-05-11 16:00,,,,,PT_Normal,,,,,KZAvg0ARUkCErJ0rzo/cIw,,,,N,0,0,,,2012-05-05 12:17,2012-05-16 14:02,admin,admin
596,130046,3769,19981,3746,1,0,N,N,N,CP_Drtn,TT_Task,DT_FixedDUR2,RV_OK,TK_NotStart,H-7-20,Engineer Release Pouring,,0,0,8,0,0,0,8,0,0,0,,,,2012-06-02 08:00,2012-06-02 16:00,,2012-06-02 08:00,2012-06-02 16:00,2012-06-02 08:00,2012-06-02 16:00,2012-06-02 08:00,2012-06-02 16:00,,2012-06-02 08:00,2012-06-02 16:00,,PT_Normal,,,,,4zv9dLTYdkSbL/Ocj1JMGA,,,,Y,0,0,,,2012-05-05 12:17,2012-05-16 14:02,admin,admin
597,130047,3769,19955,3746,1,100,N,N,N,CP_Drtn,TT_Task,DT_FixedDUR2,RV_OK,TK_Complete,H-6-20,Engineer Release Pouring,,,,0,0,0,0,8,0,0,0,,2012-03-22 00:00,2012-03-22 00:00,,,,,,,,2012-05-03 08:00,2012-05-03 16:00,,,,,PT_Normal,,,,,WoUfN/OU0EuaHTNQJv3LrQ,,,,N,0,0,,,2012-05-05 12:17,2012-05-16 14:02,admin,admin
598,130048,3769,19947,3746,1,100,N,N,N,CP_Drtn,TT_Task,DT_FixedDUR2,RV_OK,TK_Complete,H-5-20,Engineer Release Pouring,,,,0,0,0,0,8,0,0,0,,2012-03-18 00:00,2012-03-18 00:00,,,,,,,,2012-05-03 08:00,2012-05-03 16:00,,,,,PT_Normal,,,,,jaM4Ydhz1kSMeNd9tnkLVA,,,,N,0,0,,,2012-05-05 12:17,2012-05-16 14:02,admin,admin
599,130049,3769,19939,3746,1,100,N,N,N,CP_Drtn,TT_Task,DT_FixedDUR2,RV_OK,TK_Complete,H-4-20,Engineer Release Pouring,,,,0,0,0,0,8,0,0,0,,2012-03-18 00:00,2012-03-18 00:00,,,,,,,,2012-05-03 08:00,2012-05-03 16:00,,,,,PT_Normal,,,,,0lpvcF4dIkyTiPTxt2Sp/A,,,,N,0,0,,,2012-05-05 12:17,2012-05-16 14:02,admin,admin
600,130050,3769,19950,3746,1,100,N,N,N,CP_Drtn,TT_Task,DT_FixedDUR2,RV_OK,TK_Complete,H-3-20,Engineer Release Pouring,,,,0,0,0,0,8,0,0,0,,2012-03-18 00:00,2012-03-18 00:00,,,,,,,,2012-04-03 08:00,2012-04-03 16:00,,,,,PT_Normal,,,,,u9WY6XN8g0GggF4tXIBl+Q,,,,N,0,0,,,2012-05-05 12:17,2012-05-16 14:02,admin,admin
601,130051,3769,19923,3746,1,100,N,N,N,CP_Drtn,TT_Task,DT_FixedDUR2,RV_OK,TK_Complete,H-2-20,Engineer Release Pouring,,,,0,0,0,0,8,0,0,0,,2012-04-29 00:00,2012-04-29 00:00,,,,,,,,2012-06-17 12:00,2012-06-18 12:00,,,,,PT_Normal,,,,,omr78e+MpkWC2vWmhZ4qgw,,,,N,0,0,,,2012-05-05 12:17,2012-05-16 14:02,admin,admin
602,130052,3769,19952,3746,1,100,N,N,N,CP_Drtn,TT_Task,DT_FixedDUR2,RV_OK,TK_Complete,H-1-20,Engineer Release Pouring,,,,0,0,0,0,8,0,0,0,,2012-04-02 00:00,2012-04-02 00:00,,,,,,,,2012-03-30 08:00,2012-03-30 16:00,,,,,PT_Normal,,,,,xjsgQsBpcU+cfS5G/d/d/w,,,,N,0,0,,,2012-05-05 12:17,2012-05-16 14:02,admin,admin
603,130053,3769,19972,1191,1,100,N,N,N,CP_Drtn,TT_Task,DT_FixedDUR2,RV_OK,TK_Complete,C-3-30,P.C  footings concrete pouring,3779,,,0,9,0,9,8,0,0,0,,2012-03-18 00:00,2012-03-18 00:00,,,,,,,,2012-04-09 08:00,2012-04-09 16:00,,,,,PT_Normal,,,,,xZIti1O7NEaTjYz7tYZiBg,,,,N,9,0,,,2012-05-05 12:17,2012-05-16 14:02,admin,admin
604,130054,3769,19932,1191,1,100,N,N,N,CP_Drtn,TT_Task,DT_FixedDUR2,RV_OK,TK_Complete,C-2-30,P.C  footings concrete pouring,3779,,,0,11,0,11,8,0,0,0,,2012-03-18 00:00,2012-03-18 00:00,,,,,,,,2012-04-09 08:00,2012-04-09 16:00,,,,,PT_Normal,,,,,ggCiY1k450aXWh/7BcVCaA,,,,N,11,0,,,2012-05-05 12:17,2012-05-16 14:02,admin,admin
605,130055,3769,19982,1191,1,100,N,N,N,CP_Drtn,TT_Task,DT_FixedDUR2,RV_OK,TK_Complete,C-1-30,P.C  footings concrete pouring,3779,,,0,9,0,9,8,0,0,0,,2012-03-19 00:00,2012-03-19 00:00,,,,,,,,2012-04-09 08:00,2012-04-09 16:00,,,,,PT_Normal,,,,,B9p3NfjSeUOibgxxS2ylwQ,,,,N,9,0,,,2012-05-05 12:17,2012-05-16 14:02,admin,admin
606,130056,3769,19959,3746,1,100,N,N,N,CP_Drtn,TT_Task,DT_FixedDUR2,RV_OK,TK_Complete,H-12-30,P.C  footings concrete pouring,,,,0,0,0,0,8,0,0,0,,2012-05-14 00:00,2012-05-15 00:00,,,,,,,,2012-05-21 08:00,2012-05-21 16:00,,,,,PT_Normal,,,,,oKu3t1mPwkiyXiN3kZ3RiA,,,,N,0,0,,,2012-05-05 12:17,2012-05-16 14:02,admin,admin
607,130057,3769,19973,3746,1,100,N,N,N,CP_Drtn,TT_Task,DT_FixedDUR2,RV_OK,TK_Complete,H-11-30,P.C  footings concrete pouring,3779,,,0,4,0,4,8,0,0,0,,2012-04-14 00:00,2012-04-14 00:00,,,,,,,,2012-06-18 08:00,2012-06-18 16:00,,,,,PT_Normal,,,,,BLTWik+KFkCIvXOitYQUTQ,,,,N,4,0,,,2012-05-05 12:17,2012-05-16 14:02,admin,admin
608,130058,3769,19965,3746,1,100,N,N,N,CP_Drtn,TT_Task,DT_FixedDUR2,RV_OK,TK_Complete,H-10-30,P.C  footings concrete pouring,3779,,,0,14,0,14,8,0,0,0,,2012-03-21 00:00,2012-03-24 00:00,,,,,,,,2012-05-04 08:00,2012-05-04 16:00,,,,,PT_Normal,,,,,uaIddgEvm0aCzcnZ43ZOTg,,,,N,14,0,,,2012-05-05 12:17,2012-05-16 14:02,admin,admin
609,130059,3769,19979,3746,1,100,N,N,N,CP_Drtn,TT_Task,DT_FixedDUR2,RV_OK,TK_Complete,H-9-30,P.C  footings concrete pouring,3779,,,0,19,0,19,8,0,0,0,,2012-04-02 00:00,2012-04-02 00:00,,,,,,,,2012-05-12 08:00,2012-05-12 16:00,,,,,PT_Normal,,,,,Zozof0LQ9ESwHbWpahBsQQ,,,,N,19,0,,,2012-05-05 12:17,2012-05-16 14:02,admin,admin
610,130060,3769,19971,3746,1,100,N,N,N,CP_Drtn,TT_Task,DT_FixedDUR2,RV_OK,TK_Complete,H-8-30,P.C  footings concrete pouring,3779,,,0,4,0,4,8,0,0,0,,2012-04-02 00:00,2012-04-02 00:00,,,,,,,,2012-05-12 08:00,2012-05-12 16:00,,,,,PT_Normal,,,,,teM5Tgpr0U+045nlFSCeAQ,,,,N,4,0,,,2012-05-05 12:17,2012-05-16 14:02,admin,admin
611,130061,3769,19981,3746,1,0,N,N,N,CP_Drtn,TT_Task,DT_FixedDUR2,RV_OK,TK_NotStart,H-7-30,P.C  footings concrete pouring,3779,0,0,8,0,9,9,8,0,0,0,,,,2012-06-03 08:00,2012-06-03 16:00,,2012-06-03 08:00,2012-06-03 16:00,2012-06-03 08:00,2012-06-03 16:00,2012-06-03 08:00,2012-06-03 16:00,,2012-06-03 08:00,2012-06-03 16:00,,PT_Normal,,,,,yHZgzqh0uUaPx9CYIUcd1g,,,,Y,0,0,,,2012-05-05 12:17,2012-05-16 14:02,admin,admin
612,130062,3769,19955,3746,1,100,N,N,N,CP_Drtn,TT_Task,DT_FixedDUR2,RV_OK,TK_Complete,H-6-30,P.C  footings concrete pouring,3779,,,0,8,0,8,8,0,0,0,,2012-03-27 00:00,2012-03-27 00:00,,,,,,,,2012-05-04 08:00,2012-05-04 16:00,,,,,PT_Normal,,,,,N0kxlJi7PUO5NDzNChEi7A,,,,N,8,0,,,2012-05-05 12:17,2012-05-16 14:02,admin,admin
613,130063,3769,19947,3746,1,100,N,N,N,CP_Drtn,TT_Task,DT_FixedDUR2,RV_OK,TK_Complete,H-5-30,P.C  footings concrete pouring,3779,,,0,15,0,15,8,0,0,0,,2012-03-20 00:00,2012-03-20 00:00,,,,,,,,2012-05-04 08:00,2012-05-04 16:00,,,,,PT_Normal,,,,,R58mmspE9UqnEEPIUmkCxQ,,,,N,15,0,,,2012-05-05 12:17,2012-05-16 14:02,admin,admin
614,130064,3769,19939,3746,1,100,N,N,N,CP_Drtn,TT_Task,DT_FixedDUR2,RV_OK,TK_Complete,H-4-30,P.C  footings concrete pouring,3779,,,0,9,0,9,8,0,0,0,,2012-03-19 00:00,2012-03-19 00:00,,,,,,,,2012-05-04 08:00,2012-05-04 16:00,,,,,PT_Normal,,,,,OUmgIFRtBUuG4DgIfrPUig,,,,N,9,0,,,2012-05-05 12:17,2012-05-16 14:02,admin,admin
615,130065,3769,19950,3746,1,100,N,N,N,CP_Drtn,TT_Task,DT_FixedDUR2,RV_OK,TK_Complete,H-3-30,P.C  footings concrete pouring,3779,,,0,12,0,12,8,0,0,0,,2012-03-18 00:00,2012-03-18 00:00,,,,,,,,2012-04-04 08:00,2012-04-04 16:00,,,,,PT_Normal,,,,,qc+JvmL3tkidMUFfKgzKzQ,,,,N,12,0,,,2012-05-05 12:17,2012-05-16 14:02,admin,admin
616,130066,3769,19923,3746,1,0,N,N,N,CP_Drtn,TT_Task,DT_FixedDUR2,RV_OK,TK_Active,H-2-30,P.C  footings concrete pouring,3779,532,0,4,8.5,8.5,17,8,0,0,0,,2012-04-29 00:00,,2012-07-21 12:00,2012-07-21 16:00,,2012-05-16 08:00,2012-05-16 12:00,2012-05-16 08:00,2012-05-16 12:00,2012-06-18 12:00,2012-06-19 12:00,,2012-07-21 12:00,2012-07-21 16:00,,PT_Normal,,,,,mdVXR3k06Uu1a02Cg7cutw,,,,N,8.5,0,,,2012-05-05 12:17,2012-05-16 14:02,admin,admin
617,130067,3769,19952,3746,1,100,N,N,N,CP_Drtn,TT_Task,DT_FixedDUR2,RV_OK,TK_Complete,H-1-30,P.C  footings concrete pouring,3779,,,0,13,0,13,8,0,0,0,,2012-04-07 00:00,2012-04-07 00:00,,,,,,,,2012-03-31 08:00,2012-03-31 16:00,,,,,PT_Normal,,,,,hcMeB4adJkKksYeuWNEMCQ,,,,N,13,0,,,2012-05-05 12:17,2012-05-16 14:02,admin,admin
618,130068,3769,19952,3746,1,0,N,N,N,CP_Drtn,TT_Task,DT_FixedDUR2,RV_OK,TK_NotStart,H-1-510,Engineer Release Pouring,,744,0,8,0,0,0,8,0,0,0,,,,2012-10-14 08:00,2012-10-14 16:00,,2012-07-13 08:00,2012-07-13 16:00,2012-07-13 08:00,2012-07-13 16:00,2012-07-13 08:00,2012-07-13 16:00,,2012-10-14 08:00,2012-10-14 16:00,,PT_Normal,,,,,ituaaVc3A0C0JzSwg32eFg,,,,N,0,0,,,2012-05-05 12:17,2012-05-16 14:02,admin,admin
619,130069,3769,19952,3746,1,0,N,N,N,CP_Drtn,TT_Task,DT_FixedDUR2,RV_OK,TK_NotStart,H-1-530,Slab on grade Concrete Pouring,3779,744,744,8,0,11,11,8,0,0,0,,,,2012-10-15 08:00,2012-10-15 16:00,,2012-07-14 08:00,2012-07-14 16:00,2012-07-14 08:00,2012-07-14 16:00,2012-07-14 08:00,2012-07-14 16:00,,2012-10-15 08:00,2012-10-15 16:00,,PT_Normal,,,,,xkprb0sa7E2pfuP9qARH2g,,,,N,0,0,,,2012-05-05 12:17,2012-05-16 14:02,admin,admin
620,130070,3769,19923,3746,1,0,N,N,N,CP_Drtn,TT_Task,DT_FixedDUR2,RV_OK,TK_NotStart,H-2-380,Engineer Release Pouring,,788,0,8,0,0,0,8,0,0,0,,,,2012-10-14 08:00,2012-10-14 16:00,,2012-07-07 12:00,2012-07-08 12:00,2012-07-07 12:00,2012-07-08 12:00,2012-07-07 12:00,2012-07-08 12:00,,2012-10-14 08:00,2012-10-14 16:00,,PT_Normal,,,,,nwPPFCqB20K1zHVHzQc1EQ,,,,N,0,0,,,2012-05-05 12:17,2012-05-16 14:02,admin,admin
621,130071,3769,19950,3746,1,0,N,N,N,CP_Drtn,TT_Task,DT_FixedDUR2,RV_OK,TK_NotStart,H-3-370,Engineer Release Pouring,,1048,0,8,0,0,0,8,0,0,0,,,,2012-10-14 08:00,2012-10-14 16:00,,2012-06-05 08:00,2012-06-05 16:00,2012-06-05 08:00,2012-06-05 16:00,2012-06-05 08:00,2012-06-05 16:00,,2012-10-14 08:00,2012-10-14 16:00,,PT_Normal,,,,,OMQNzrqxT0uGrHac5asUMg,,,,N,0,0,,,2012-05-05 12:17,2012-05-16 14:02,admin,admin
622,130072,3769,19939,3746,1,0,N,N,N,CP_Drtn,TT_Task,DT_FixedDUR2,RV_OK,TK_NotStart,H-4-370,Engineer Release Pouring,,1008,0,8,0,0,0,8,0,0,0,,,,2012-10-14 08:00,2012-10-14 16:00,,2012-06-10 08:00,2012-06-10 16:00,2012-06-10 08:00,2012-06-10 16:00,2012-06-10 08:00,2012-06-10 16:00,,2012-10-14 08:00,2012-10-14 16:00,,PT_Normal,,,,,4djlN0l990WSWrKevYdngw,,,,N,0,0,,,2012-05-05 12:17,2012-05-16 14:02,admin,admin
623,130073,3769,19947,3746,1,0,N,N,N,CP_Drtn,TT_Task,DT_FixedDUR2,RV_OK,TK_NotStart,H-5-370,Engineer Release Pouring,,1048,0,8,0,0,0,8,0,0,0,,,,2012-10-14 08:00,2012-10-14 16:00,,2012-06-05 08:00,2012-06-05 16:00,2012-06-05 08:00,2012-06-05 16:00,2012-06-05 08:00,2012-06-05 16:00,,2012-10-14 08:00,2012-10-14 16:00,,PT_Normal,,,,,Go3xagIwf0ispMdVOj9S9Q,,,,N,0,0,,,2012-05-05 12:17,2012-05-16 14:02,admin,admin
624,130074,3769,19955,3746,1,0,N,N,N,CP_Drtn,TT_Task,DT_FixedDUR2,RV_OK,TK_NotStart,H-6-370,Engineer Release Pouring,,1048,0,8,0,0,0,8,0,0,0,,,,2012-10-14 08:00,2012-10-14 16:00,,2012-06-05 08:00,2012-06-05 16:00,2012-06-05 08:00,2012-06-05 16:00,2012-06-05 08:00,2012-06-05 16:00,,2012-10-14 08:00,2012-10-14 16:00,,PT_Normal,,,,,QqevLDKfm0uDoHJIqpWiAQ,,,,N,0,0,,,2012-05-05 12:17,2012-05-16 14:02,admin,admin
625,130075,3769,19981,3746,1,0,N,N,N,CP_Drtn,TT_Task,DT_FixedDUR2,RV_OK,TK_NotStart,H-7-370,Engineer Release Pouring,,440,0,8,0,0,0,8,0,0,0,,,,2012-10-14 08:00,2012-10-14 16:00,,2012-08-20 08:00,2012-08-20 16:00,2012-08-20 08:00,2012-08-20 16:00,2012-08-20 08:00,2012-08-20 16:00,,2012-10-14 08:00,2012-10-14 16:00,,PT_Normal,,,,,LrbamK5s90i8vO912WvYNQ,,,,N,0,0,,,2012-05-05 12:17,2012-05-16 14:02,admin,admin
626,130076,3769,19971,3746,1,0,N,N,N,CP_Drtn,TT_Task,DT_FixedDUR2,RV_OK,TK_NotStart,H-8-370,Engineer Release Pouring,,1048,0,8,0,0,0,8,0,0,0,,,,2012-10-14 08:00,2012-10-14 16:00,,2012-06-05 08:00,2012-06-05 16:00,2012-06-05 08:00,2012-06-05 16:00,2012-06-05 08:00,2012-06-05 16:00,,2012-10-14 08:00,2012-10-14 16:00,,PT_Normal,,,,,dGyF7LhegUe/fB25COOl7Q,,,,N,0,0,,,2012-05-05 12:17,2012-05-16 14:02,admin,admin
627,130077,3769,19979,3746,1,0,N,N,N,CP_Drtn,TT_Task,DT_FixedDUR2,RV_OK,TK_NotStart,H-9-370,Engineer Release Pouring,,1016,0,8,0,0,0,8,0,0,0,,,,2012-10-14 08:00,2012-10-14 16:00,,2012-06-09 08:00,2012-06-09 16:00,2012-06-09 08:00,2012-06-09 16:00,2012-06-09 08:00,2012-06-09 16:00,,2012-10-14 08:00,2012-10-14 16:00,,PT_Normal,,,,,QbDd8UrZEEmEXRUgS/rjyw,,,,N,0,0,,,2012-05-05 12:17,2012-05-16 14:02,admin,admin
628,130078,3769,19965,3746,1,0,N,N,N,CP_Drtn,TT_Task,DT_FixedDUR2,RV_OK,TK_NotStart,H-10-320,Engineer Release Pouring,,1104,0,8,0,0,0,8,0,0,0,,,,2012-10-14 08:00,2012-10-14 16:00,,2012-05-29 08:00,2012-05-29 16:00,2012-05-29 08:00,2012-05-29 16:00,2012-05-29 08:00,2012-05-29 16:00,,2012-10-14 08:00,2012-10-14 16:00,,PT_Normal,,,,,D+X9m7QCeUe8OSh32KY5Gw,,,,N,0,0,,,2012-05-05 12:17,2012-05-16 14:02,admin,admin
629,130079,3769,19973,3746,1,0,N,N,N,CP_Drtn,TT_Task,DT_FixedDUR2,RV_OK,TK_NotStart,H-11-370,Engineer Release Pouring,,952,0,8,0,0,0,8,0,0,0,,,,2012-10-14 08:00,2012-10-14 16:00,,2012-06-17 08:00,2012-06-17 16:00,2012-06-17 08:00,2012-06-17 16:00,2012-06-17 08:00,2012-06-17 16:00,,2012-10-14 08:00,2012-10-14 16:00,,PT_Normal,,,,,IPaMkH7evUKGkGMIEZsb7A,,,,N,0,0,,,2012-05-05 12:17,2012-05-16 14:02,admin,admin
630,130080,3769,19959,3746,1,0,N,N,N,CP_Drtn,TT_Task,DT_FixedDUR2,RV_OK,TK_NotStart,H-12-510,Engineer Release Pouring,,280,0,8,0,0,0,8,0,0,0,,,,2012-10-14 08:00,2012-10-14 16:00,,2012-09-09 08:00,2012-09-09 16:00,2012-09-09 08:00,2012-09-09 16:00,2012-09-09 08:00,2012-09-09 16:00,,2012-10-14 08:00,2012-10-14 16:00,,PT_Normal,,,,,yE/bE1a4q0KRusPWdJlFuQ,,,,N,0,0,,,2012-05-05 12:17,2012-05-16 14:02,admin,admin
631,130081,3769,19923,3746,1,0,N,N,N,CP_Drtn,TT_Task,DT_FixedDUR2,RV_OK,TK_NotStart,H-2-390,Slab on grade Concrete Pouring,3779,788,788,8,0,18,18,8,0,0,0,,,,2012-10-15 08:00,2012-10-15 16:00,,2012-07-08 12:00,2012-07-09 12:00,2012-07-08 12:00,2012-07-09 12:00,2012-07-08 12:00,2012-07-09 12:00,,2012-10-15 08:00,2012-10-15 16:00,,PT_Normal,,,,,ojS5WuEDck6SOal88IHoIQ,,,,N,0,0,,,2012-05-05 12:17,2012-05-16 14:02,admin,admin
632,130082,3769,19950,3746,1,0,N,N,N,CP_Drtn,TT_Task,DT_FixedDUR2,RV_OK,TK_NotStart,H-3-390,Slab on grade Concrete Pouring,3779,1048,1048,8,0,12,12,8,0,0,0,,,,2012-10-15 08:00,2012-10-15 16:00,,2012-06-06 08:00,2012-06-06 16:00,2012-06-06 08:00,2012-06-06 16:00,2012-06-06 08:00,2012-06-06 16:00,,2012-10-15 08:00,2012-10-15 16:00,,PT_Normal,,,,,IdzwQAUAJkal+dOesS7+ww,,,,N,0,0,,,2012-05-05 12:17,2012-05-16 14:02,admin,admin
633,130083,3769,19939,3746,1,0,N,N,N,CP_Drtn,TT_Task,DT_FixedDUR2,RV_OK,TK_NotStart,H-4-390,Slab on grade Concrete Pouring,3779,1008,1008,8,0,9,9,8,0,0,0,,,,2012-10-15 08:00,2012-10-15 16:00,,2012-06-11 08:00,2012-06-11 16:00,2012-06-11 08:00,2012-06-11 16:00,2012-06-11 08:00,2012-06-11 16:00,,2012-10-15 08:00,2012-10-15 16:00,,PT_Normal,,,,,0pNej4EFm0yLU2dNOXkxrQ,,,,N,0,0,,,2012-05-05 12:17,2012-05-16 14:02,admin,admin
634,130084,3769,19947,3746,1,0,N,N,N,CP_Drtn,TT_Task,DT_FixedDUR2,RV_OK,TK_NotStart,H-5-390,Slab on grade Concrete Pouring,3779,1048,1048,8,0,15,15,8,0,0,0,,,,2012-10-15 08:00,2012-10-15 16:00,,2012-06-06 08:00,2012-06-06 16:00,2012-06-06 08:00,2012-06-06 16:00,2012-06-06 08:00,2012-06-06 16:00,,2012-10-15 08:00,2012-10-15 16:00,,PT_Normal,,,,,ktqcCH2Cj06SVeI6O9VS8g,,,,N,0,0,,,2012-05-05 12:17,2012-05-16 14:02,admin,admin
635,130085,3769,19955,3746,1,0,N,N,N,CP_Drtn,TT_Task,DT_FixedDUR2,RV_OK,TK_NotStart,H-6-390,Slab on grade Concrete Pouring,3779,1048,1048,8,0,8,8,8,0,0,0,,,,2012-10-15 08:00,2012-10-15 16:00,,2012-06-06 08:00,2012-06-06 16:00,2012-06-06 08:00,2012-06-06 16:00,2012-06-06 08:00,2012-06-06 16:00,,2012-10-15 08:00,2012-10-15 16:00,,PT_Normal,,,,,zP7vwj28ekG7C68FhRI4Sg,,,,N,0,0,,,2012-05-05 12:17,2012-05-16 14:02,admin,admin
636,130086,3769,19981,3746,1,0,N,N,N,CP_Drtn,TT_Task,DT_FixedDUR2,RV_OK,TK_NotStart,H-7-390,Slab on grade Concrete Pouring,3779,440,440,8,0,12,12,8,0,0,0,,,,2012-10-15 08:00,2012-10-15 16:00,,2012-08-21 08:00,2012-08-21 16:00,2012-08-21 08:00,2012-08-21 16:00,2012-08-21 08:00,2012-08-21 16:00,,2012-10-15 08:00,2012-10-15 16:00,,PT_Normal,,,,,AuoVZoHNLk+mcgUMDJsL2w,,,,N,0,0,,,2012-05-05 12:17,2012-05-16 14:02,admin,admin
637,130087,3769,19971,3746,1,0,N,N,N,CP_Drtn,TT_Task,DT_FixedDUR2,RV_OK,TK_NotStart,H-8-390,Slab on grade Concrete Pouring,3779,1048,1048,8,0,10,10,8,0,0,0,,,,2012-10-15 08:00,2012-10-15 16:00,,2012-06-06 08:00,2012-06-06 16:00,2012-06-06 08:00,2012-06-06 16:00,2012-06-06 08:00,2012-06-06 16:00,,2012-10-15 08:00,2012-10-15 16:00,,PT_Normal,,,,,hMhlh5+j10eSrEJ5r7u3JQ,,,,N,0,0,,,2012-05-05 12:17,2012-05-16 14:02,admin,admin
638,130088,3769,19979,3746,1,0,N,N,N,CP_Drtn,TT_Task,DT_FixedDUR2,RV_OK,TK_NotStart,H-9-390,Slab on grade Concrete Pouring,3779,1016,1016,8,0,19,19,8,0,0,0,,,,2012-10-15 08:00,2012-10-15 16:00,,2012-06-10 08:00,2012-06-10 16:00,2012-06-10 08:00,2012-06-10 16:00,2012-06-10 08:00,2012-06-10 16:00,,2012-10-15 08:00,2012-10-15 16:00,,PT_Normal,,,,,H0aIOexcRk6grApNHKC8rw,,,,N,0,0,,,2012-05-05 12:17,2012-05-16 14:02,admin,admin
639,130089,3769,19965,3746,1,0,N,N,N,CP_Drtn,TT_Task,DT_FixedDUR2,RV_OK,TK_NotStart,H-10-330,Slab on grade Concrete Pouring,3779,1104,1104,8,0,20,20,8,0,0,0,,,,2012-10-15 08:00,2012-10-15 16:00,,2012-05-30 08:00,2012-05-30 16:00,2012-05-30 08:00,2012-05-30 16:00,2012-05-30 08:00,2012-05-30 16:00,,2012-10-15 08:00,2012-10-15 16:00,,PT_Normal,,,,,3rLiHkOw2kOqENEv8jPPDA,,,,N,0,0,,,2012-05-05 12:17,2012-05-16 14:02,admin,admin
640,130090,3769,19973,3746,1,0,N,N,N,CP_Drtn,TT_Task,DT_FixedDUR2,RV_OK,TK_NotStart,H-11-390,Slab on grade Concrete Pouring,3779,952,952,8,0,10,10,8,0,0,0,,,,2012-10-15 08:00,2012-10-15 16:00,,2012-06-18 08:00,2012-06-18 16:00,2012-06-18 08:00,2012-06-18 16:00,2012-06-18 08:00,2012-06-18 16:00,,2012-10-15 08:00,2012-10-15 16:00,,PT_Normal,,,,,+2lERF+NgECowd0MBDciYg,,,,N,0,0,,,2012-05-05 12:17,2012-05-16 14:02,admin,admin
641,130091,3769,19959,3746,1,0,N,N,N,CP_Drtn,TT_Task,DT_FixedDUR2,RV_OK,TK_NotStart,H-12-530,Slab on grade Concrete Pouring,,280,280,8,0,0,0,8,0,0,0,,,,2012-10-15 08:00,2012-10-15 16:00,,2012-09-10 08:00,2012-09-10 16:00,2012-09-10 08:00,2012-09-10 16:00,2012-09-10 08:00,2012-09-10 16:00,,2012-10-15 08:00,2012-10-15 16:00,,PT_Normal,,,,,FA6o0KJ0jUCzPZGiWCX6HA,,,,N,0,0,,,2012-05-05 12:17,2012-05-16 14:02,admin,admin
642,130092,3769,19995,3746,1,100,N,N,N,CP_Drtn,TT_Task,DT_FixedDUR2,RV_OK,TK_Complete,H-1-50,Engineer inspection & approval formwork,,,,0,0,0,0,8,0,0,0,,2012-04-19 00:00,2012-04-19 00:00,,,,,,,,2012-05-10 08:00,2012-05-10 16:00,,,,,PT_Normal,,,,,XMPjNy3KuUOMfW8633w8qw,,,,N,0,0,,,2012-05-05 12:17,2012-05-16 14:02,admin,admin
643,130093,3769,19995,3746,1,100,N,N,N,CP_Drtn,TT_Task,DT_FixedDUR2,RV_OK,TK_Complete,H-1-70,Engineer inspection & approval steel work,,,,0,0,0,0,8,0,0,0,,2012-04-23 00:00,2012-04-23 00:00,,,,,,,,2012-05-14 08:00,2012-05-14 16:00,,,,,PT_Normal,,,,,113h/rwhMUiAPrRUEKXXCw,,,,N,0,0,,,2012-05-05 12:17,2012-05-16 14:02,admin,admin
644,130094,3769,19996,3746,1,0,N,N,N,CP_Drtn,TT_Task,DT_FixedDUR2,RV_OK,TK_NotStart,H-1-250,Columns form works ISPECTION,,352,0,8,0,0,0,8,0,0,0,,,,2012-07-11 08:00,2012-07-11 16:00,,2012-05-28 08:00,2012-05-28 16:00,2012-05-28 08:00,2012-05-28 16:00,2012-05-28 08:00,2012-05-28 16:00,,2012-07-11 08:00,2012-07-11 16:00,,PT_Normal,,,,,i9BI8oVRfkqSVtO/KXldew,,,,N,0,0,,,2012-05-05 12:17,2012-05-16 14:02,admin,admin
645,130095,3769,19996,3746,1,0,N,N,N,CP_Drtn,TT_Task,DT_FixedDUR2,RV_OK,TK_NotStart,H-1-270,Columns Steel works ISPECTION,,352,0,8,0,0,0,8,0,0,0,,,,2012-07-15 08:00,2012-07-15 16:00,,2012-06-01 08:00,2012-06-01 16:00,2012-06-01 08:00,2012-06-01 16:00,2012-06-01 08:00,2012-06-01 16:00,,2012-07-15 08:00,2012-07-15 16:00,,PT_Normal,,,,,tyL1J2TsOEe6eaZfPxZoyg,,,,N,0,0,,,2012-05-05 12:17,2012-05-16 14:02,admin,admin
646,130096,3769,19991,3746,1,0,N,N,N,CP_Drtn,TT_Task,DT_FixedDUR2,RV_OK,TK_NotStart,H-1-370,Columns form works ISPECTION,,352,0,8,0,0,0,8,0,0,0,,,,2012-08-09 08:00,2012-08-09 16:00,,2012-06-26 08:00,2012-06-26 16:00,2012-06-26 08:00,2012-06-26 16:00,2012-06-26 08:00,2012-06-26 16:00,,2012-08-09 08:00,2012-08-09 16:00,,PT_Normal,,,,,9zJr3UQOGkaRQj7pO22OBg,,,,N,0,0,,,2012-05-05 12:17,2012-05-16 14:02,admin,admin
647,130097,3769,20018,3746,1,0,N,N,N,CP_Drtn,TT_Task,DT_FixedDUR2,RV_OK,TK_NotStart,H-1-540,Columns form works ISPECTION,,352,0,8,0,0,0,8,0,0,0,,,,2012-09-07 08:00,2012-09-07 16:00,,2012-07-25 08:00,2012-07-25 16:00,2012-07-25 08:00,2012-07-25 16:00,2012-07-25 08:00,2012-07-25 16:00,,2012-09-07 08:00,2012-09-07 16:00,,PT_Normal,,,,,AzwUN9JBqEGKuqX7ItT4MQ,,,,N,0,0,,,2012-05-05 12:17,2012-05-16 14:02,admin,admin
648,130098,3769,20002,3746,1,0,N,N,N,CP_Drtn,TT_Task,DT_FixedDUR2,RV_OK,TK_NotStart,H-2-110,Columns form works ISPECTION,,532,0,8,0,0,0,8,0,0,0,,,,2012-08-03 08:00,2012-08-03 16:00,,2012-05-28 12:00,2012-05-29 12:00,2012-05-28 12:00,2012-05-29 12:00,2012-05-28 12:00,2012-05-29 12:00,,2012-08-03 08:00,2012-08-03 16:00,,PT_Normal,,,,,F09zmNTZW0K7rOelBcVS2g,,,,N,0,0,,,2012-05-05 12:17,2012-05-16 14:02,admin,admin
649,130099,3769,19994,3746,1,0,N,N,N,CP_Drtn,TT_Task,DT_FixedDUR2,RV_OK,TK_NotStart,H-2-230,Columns form works ISPECTION,,532,0,8,0,0,0,8,0,0,0,,,,2012-08-25 08:00,2012-08-25 16:00,,2012-06-19 12:00,2012-06-20 12:00,2012-06-19 12:00,2012-06-20 12:00,2012-06-19 12:00,2012-06-20 12:00,,2012-08-25 08:00,2012-08-25 16:00,,PT_Normal,,,,,nNjdxv6MDEy3s3KIWe/XAA,,,,N,0,0,,,2012-05-05 12:17,2012-05-16 14:02,admin,admin
650,130100,3769,20007,3746,1,0,N,N,N,CP_Drtn,TT_Task,DT_FixedDUR2,RV_OK,TK_NotStart,H-2-400,Columns form works ISPECTION,,532,0,8,0,0,0,8,0,0,0,,,,2012-09-15 08:00,2012-09-15 16:00,,2012-07-10 12:00,2012-07-11 12:00,2012-07-10 12:00,2012-07-11 12:00,2012-07-10 12:00,2012-07-11 12:00,,2012-09-15 08:00,2012-09-15 16:00,,PT_Normal,,,,,hV+owlBvYk6/pdL5Ucp1vw,,,,N,0,0,,,2012-05-05 12:17,2012-05-16 14:02,admin,admin
651,130101,3769,20010,3746,1,100,N,N,N,CP_Drtn,TT_Task,DT_FixedDUR2,RV_OK,TK_Complete,H-3-110,Columns form works ISPECTION,,,,0,0,0,0,8,0,0,0,,2012-04-11 00:00,2012-04-11 00:00,,,,,,,,2012-05-17 08:00,2012-05-17 16:00,,,,,PT_Normal,,,,,+Rk0DBYp10ijOml7bkwcWg,,,,N,0,0,,,2012-05-05 12:17,2012-05-16 14:02,admin,admin
652,130102,3769,20038,3746,1,100,N,N,N,CP_Drtn,TT_Task,DT_FixedDUR2,RV_OK,TK_Complete,H-3-230,Columns form works ISPECTION,,,,0,0,0,0,8,0,0,0,,2012-04-29 00:00,2012-04-29 00:00,,,,,,,,2012-05-07 09:36,2012-05-08 09:36,,,,,PT_Normal,,,,,aEDAtN0AB0yRm51/teY3xw,,,,N,0,0,,,2012-05-05 12:17,2012-05-16 14:02,admin,admin
653,130103,3769,20015,3746,1,0,N,N,N,CP_Drtn,TT_Task,DT_FixedDUR2,RV_OK,TK_NotStart,H-3-400,Columns form works ISPECTION,,736,0,8,0,0,0,8,0,0,0,,,,2012-09-01 08:00,2012-09-01 16:00,,2012-06-01 08:00,2012-06-01 16:00,2012-06-01 08:00,2012-06-01 16:00,2012-06-01 08:00,2012-06-01 16:00,,2012-09-01 08:00,2012-09-01 16:00,,PT_Normal,,,,,k5sMHNznj0qe4Lwg8gGzOQ,,,,N,0,0,,,2012-05-05 12:17,2012-05-16 14:02,admin,admin
654,130104,3769,19999,3746,1,100,N,N,N,CP_Drtn,TT_Task,DT_FixedDUR2,RV_OK,TK_Complete,H-4-110,Columns form works ISPECTION,,,,0,0,0,0,8,0,0,0,,2012-04-15 00:00,2012-04-15 00:00,,,,,,,,2012-05-07 08:00,2012-05-07 16:00,,,,,PT_Normal,,,,,CS9Wc2uQkUGXJ+UygEnIAw,,,,N,0,0,,,2012-05-05 12:17,2012-05-16 14:02,admin,admin
655,130105,3769,20000,3746,1,0,N,N,N,CP_Drtn,TT_Task,DT_FixedDUR2,RV_OK,TK_NotStart,H-4-230,Columns form works ISPECTION,,536,0,8,0,0,0,8,0,0,0,,,,2012-07-27 08:00,2012-07-27 16:00,,2012-05-21 08:00,2012-05-21 16:00,2012-05-21 08:00,2012-05-21 16:00,2012-05-21 08:00,2012-05-21 16:00,,2012-07-27 08:00,2012-07-27 16:00,,PT_Normal,,,,,bxYY+L1wUUCvkUt/TBTWhQ,,,,N,0,0,,,2012-05-05 12:17,2012-05-16 14:02,admin,admin
656,130106,3769,20023,3746,1,0,N,N,N,CP_Drtn,TT_Task,DT_FixedDUR2,RV_OK,TK_NotStart,H-4-400,Columns form works ISPECTION,,536,0,8,0,0,0,8,0,0,0,,,,2012-09-01 08:00,2012-09-01 16:00,,2012-06-26 08:00,2012-06-26 16:00,2012-06-26 08:00,2012-06-26 16:00,2012-06-26 08:00,2012-06-26 16:00,,2012-09-01 08:00,2012-09-01 16:00,,PT_Normal,,,,,A9FmZL1kf0WZPaI2h8ia8A,,,,N,0,0,,,2012-05-05 12:17,2012-05-16 14:02,admin,admin
657,130107,3769,19990,3746,1,100,N,N,N,CP_Drtn,TT_Task,DT_FixedDUR2,RV_OK,TK_Complete,H-5-110,Columns form works ISPECTION,,,,0,0,0,0,8,0,0,0,,2012-04-10 00:00,2012-04-10 00:00,,,,,,,,2012-05-18 08:00,2012-05-18 16:00,,,,,PT_Normal,,,,,glXcKH06pUur3ngt/dDCFQ,,,,N,0,0,,,2012-05-05 12:17,2012-05-16 14:02,admin,admin
658,130108,3769,20008,3746,1,100,N,N,N,CP_Drtn,TT_Task,DT_FixedDUR2,RV_OK,TK_Complete,H-5-230,Columns form works ISPECTION,,,,0,0,0,0,8,0,0,0,,2012-04-25 00:00,2012-04-25 00:00,,,,,,,,2012-05-11 12:00,2012-05-12 12:00,,,,,PT_Normal,,,,,TIM6ho4Da0G469ZAkQi4Sg,,,,N,0,0,,,2012-05-05 12:17,2012-05-16 14:02,admin,admin
659,130109,3769,20031,3746,1,0,N,N,N,CP_Drtn,TT_Task,DT_FixedDUR2,RV_OK,TK_NotStart,H-5-400,Columns form works ISPECTION,,736,0,8,0,0,0,8,0,0,0,,,,2012-09-01 08:00,2012-09-01 16:00,,2012-06-01 08:00,2012-06-01 16:00,2012-06-01 08:00,2012-06-01 16:00,2012-06-01 08:00,2012-06-01 16:00,,2012-09-01 08:00,2012-09-01 16:00,,PT_Normal,,,,,NI+WE7yQfkGXEsba24/4Vw,,,,N,0,0,,,2012-05-05 12:17,2012-05-16 14:02,admin,admin
660,130110,3769,19993,3746,1,100,N,N,N,CP_Drtn,TT_Task,DT_FixedDUR2,RV_OK,TK_Complete,H-6-110,Columns form works ISPECTION,,,,0,0,0,0,8,0,0,0,,2012-04-19 00:00,2012-04-19 00:00,,,,,,,,2012-05-07 08:00,2012-05-07 16:00,,,,,PT_Normal,,,,,qg0HgLINSE2wr9vknhLadw,,,,N,0,0,,,2012-05-05 12:17,2012-05-16 14:02,admin,admin
661,130111,3769,19992,3746,1,100,N,N,N,CP_Drtn,TT_Task,DT_FixedDUR2,RV_OK,TK_Complete,H-6-230,Columns form works ISPECTION,,,,0,0,0,0,8,0,0,0,,2012-05-09 00:00,2012-05-09 00:00,,,,,,,,2012-05-16 12:00,2012-05-17 12:00,,,,,PT_Normal,,,,,FQTzoQ3oG0eIXVPDOKtiPw,,,,N,0,0,,,2012-05-05 12:17,2012-05-16 14:02,admin,admin
662,130112,3769,20017,3746,1,0,N,N,N,CP_Drtn,TT_Task,DT_FixedDUR2,RV_OK,TK_NotStart,H-6-400,Columns form works ISPECTION,,736,0,8,0,0,0,8,0,0,0,,,,2012-09-01 08:00,2012-09-01 16:00,,2012-06-01 08:00,2012-06-01 16:00,2012-06-01 08:00,2012-06-01 16:00,2012-06-01 08:00,2012-06-01 16:00,,2012-09-01 08:00,2012-09-01 16:00,,PT_Normal,,,,,slDLNgtHnk26WkO5DdEYvQ,,,,N,0,0,,,2012-05-05 12:17,2012-05-16 14:02,admin,admin
663,130113,3769,20004,3746,1,0,N,N,N,CP_Drtn,TT_Task,DT_FixedDUR2,RV_OK,TK_NotStart,H-7-110,Columns form works ISPECTION,,0,0,8,0,0,0,8,0,0,0,,,,2012-06-25 08:00,2012-06-25 16:00,,2012-06-25 08:00,2012-06-25 16:00,2012-06-25 08:00,2012-06-25 16:00,2012-06-25 08:00,2012-06-25 16:00,,2012-06-25 08:00,2012-06-25 16:00,,PT_Normal,,,,,FxqdgAssgESodYLf+dhr7w,,,,Y,0,0,,,2012-05-05 12:17,2012-05-16 14:02,admin,admin
664,130114,3769,20005,3746,1,0,N,N,N,CP_Drtn,TT_Task,DT_FixedDUR2,RV_OK,TK_NotStart,H-7-230,Columns form works ISPECTION,,0,0,8,0,0,0,8,0,0,0,,,,2012-07-27 08:00,2012-07-27 16:00,,2012-07-27 08:00,2012-07-27 16:00,2012-07-27 08:00,2012-07-27 16:00,2012-07-27 08:00,2012-07-27 16:00,,2012-07-27 08:00,2012-07-27 16:00,,PT_Normal,,,,,w8FZXuT44kaF+jedTiYswQ,,,,Y,0,0,,,2012-05-05 12:17,2012-05-16 14:02,admin,admin
665,130115,3769,20006,3746,1,0,N,N,N,CP_Drtn,TT_Task,DT_FixedDUR2,RV_OK,TK_NotStart,H-7-400,Columns form works ISPECTION,,0,0,8,0,0,0,8,0,0,0,,,,2012-09-01 08:00,2012-09-01 16:00,,2012-09-01 08:00,2012-09-01 16:00,2012-09-01 08:00,2012-09-01 16:00,2012-09-01 08:00,2012-09-01 16:00,,2012-09-01 08:00,2012-09-01 16:00,,PT_Normal,,,,,JjlBoD4lyEORnjejD2ke9w,,,,Y,0,0,,,2012-05-05 12:17,2012-05-16 14:02,admin,admin
666,130116,3769,20012,3746,1,100,N,N,N,CP_Drtn,TT_Task,DT_FixedDUR2,RV_OK,TK_Complete,H-8-110,Columns form works ISPECTION,,,,0,0,0,0,8,0,0,0,,2012-04-19 00:00,2012-04-19 00:00,,,,,,,,2012-05-13 08:00,2012-05-13 16:00,,,,,PT_Normal,,,,,NyLfiyM8vkmb5AIqwRlCaA,,,,N,0,0,,,2012-05-05 12:17,2012-05-16 14:02,admin,admin
667,130117,3769,20013,3746,1,100,N,N,N,CP_Drtn,TT_Task,DT_FixedDUR2,RV_OK,TK_Complete,H-8-230,Columns form works ISPECTION,,,,0,0,0,0,8,0,0,0,,2012-05-08 00:00,2012-05-08 00:00,,,,,,,,2012-05-16 09:36,2012-05-17 09:36,,,,,PT_Normal,,,,,EmsRyATSjkGkjwqSN8PPzw,,,,N,0,0,,,2012-05-05 12:17,2012-05-16 14:02,admin,admin
668,130118,3769,20014,3746,1,0,N,N,N,CP_Drtn,TT_Task,DT_FixedDUR2,RV_OK,TK_NotStart,H-8-400,Columns form works ISPECTION,,684,0,8,0,0,0,8,0,0,0,,,,2012-09-01 08:00,2012-09-01 16:00,,2012-06-07 12:00,2012-06-08 12:00,2012-06-07 12:00,2012-06-08 12:00,2012-06-07 12:00,2012-06-08 12:00,,2012-09-01 08:00,2012-09-01 16:00,,PT_Normal,,,,,i3jhtAnYq0KhITLVDtvovA,,,,N,0,0,,,2012-05-05 12:17,2012-05-16 14:02,admin,admin
669,130119,3769,20020,3746,1,100,N,N,N,CP_Drtn,TT_Task,DT_FixedDUR2,RV_OK,TK_Complete,H-9-110,Columns form works ISPECTION,,,,0,0,0,0,8,0,0,0,,2012-04-21 00:00,2012-04-21 00:00,,,,,,,,2012-05-11 08:00,2012-05-11 16:00,,,,,PT_Normal,,,,,u/SXEYkn+kq5ItGXz3QLZQ,,,,N,0,0,,,2012-05-05 12:17,2012-05-16 14:02,admin,admin
670,130120,3769,19995,3746,1,100,N,N,N,CP_Drtn,TT_Task,DT_FixedDUR2,RV_OK,TK_Complete,H-1-80,Engineer Release Pouring,,,,0,0,0,0,8,0,0,0,,2012-04-24 00:00,2012-04-24 00:00,,,,,,,,2012-05-14 08:00,2012-05-14 16:00,,,,,PT_Normal,,,,,bXiBou/R4UK3EER/ctC5hQ,,,,N,0,0,,,2012-05-05 12:17,2012-05-16 14:02,admin,admin
671,130121,3769,19996,3746,1,0,N,N,N,CP_Drtn,TT_Task,DT_FixedDUR2,RV_OK,TK_NotStart,H-1-280,Engineer Release Pouring,,352,0,8,0,0,0,8,0,0,0,,,,2012-07-15 08:00,2012-07-15 16:00,,2012-06-01 08:00,2012-06-01 16:00,2012-06-01 08:00,2012-06-01 16:00,2012-06-01 08:00,2012-06-01 16:00,,2012-07-15 08:00,2012-07-15 16:00,,PT_Normal,,,,,mLrQh/WihEaSA/5r/CaCVA,,,,N,0,0,,,2012-05-05 12:17,2012-05-16 14:02,admin,admin
672,130122,3769,19996,3746,1,0,N,N,N,CP_Drtn,TT_Task,DT_FixedDUR2,RV_OK,TK_NotStart,H-1-310,Slab form works inspection,,352,0,8,0,0,0,8,0,0,0,,,,2012-07-27 08:00,2012-07-27 16:00,,2012-06-13 08:00,2012-06-13 16:00,2012-06-13 08:00,2012-06-13 16:00,2012-06-13 08:00,2012-06-13 16:00,,2012-07-27 08:00,2012-07-27 16:00,,PT_Normal,,,,,GLZZbtO18U+yeNToKLFcng,,,,N,0,0,,,2012-05-05 12:17,2012-05-16 14:02,admin,admin
673,130123,3769,19996,3746,1,0,N,N,N,CP_Drtn,TT_Task,DT_FixedDUR2,RV_OK,TK_NotStart,H-1-330,Slab steel works inspection,,352,0,8,0,0,0,8,0,0,0,,,,2012-08-01 08:00,2012-08-01 16:00,,2012-06-18 08:00,2012-06-18 16:00,2012-06-18 08:00,2012-06-18 16:00,2012-06-18 08:00,2012-06-18 16:00,,2012-08-01 08:00,2012-08-01 16:00,,PT_Normal,,,,,AYq9mbW/6kSzdyc+XX/4bA,,,,N,0,0,,,2012-05-05 12:17,2012-05-16 14:02,admin,admin
674,130124,3769,19996,3746,1,0,N,N,N,CP_Drtn,TT_Task,DT_FixedDUR2,RV_OK,TK_NotStart,H-1-340,Engineer Release Pouring,,352,0,8,0,0,0,8,0,0,0,,,,2012-08-01 08:00,2012-08-01 16:00,,2012-06-18 08:00,2012-06-18 16:00,2012-06-18 08:00,2012-06-18 16:00,2012-06-18 08:00,2012-06-18 16:00,,2012-08-01 08:00,2012-08-01 16:00,,PT_Normal,,,,,OmlM79rkEk6AgrlCHz+DBw,,,,N,0,0,,,2012-05-05 12:17,2012-05-16 14:02,admin,admin
675,130125,3769,19991,3746,1,0,N,N,N,CP_Drtn,TT_Task,DT_FixedDUR2,RV_OK,TK_NotStart,H-1-400,Columns steel works ISPECTION,,352,0,8,0,0,0,8,0,0,0,,,,2012-08-13 08:00,2012-08-13 16:00,,2012-06-30 08:00,2012-06-30 16:00,2012-06-30 08:00,2012-06-30 16:00,2012-06-30 08:00,2012-06-30 16:00,,2012-08-13 08:00,2012-08-13 16:00,,PT_Normal,,,,,oX7M+G3GaUakKhcLV4X2aw,,,,N,0,0,,,2012-05-05 12:17,2012-05-16 14:02,admin,admin
676,130126,3769,19991,3746,1,0,N,N,N,CP_Drtn,TT_Task,DT_FixedDUR2,RV_OK,TK_NotStart,H-1-410,Engineer Release Pouring,,352,0,8,0,0,0,8,0,0,0,,,,2012-08-13 08:00,2012-08-13 16:00,,2012-06-30 08:00,2012-06-30 16:00,2012-06-30 08:00,2012-06-30 16:00,2012-06-30 08:00,2012-06-30 16:00,,2012-08-13 08:00,2012-08-13 16:00,,PT_Normal,,,,,rCJDy3SjIk64vYism9aksg,,,,N,0,0,,,2012-05-05 12:17,2012-05-16 14:02,admin,admin
677,130127,3769,19991,3746,1,0,N,N,N,CP_Drtn,TT_Task,DT_FixedDUR2,RV_OK,TK_NotStart,H-1-480,Engineer Release Pouring,,352,0,8,0,0,0,8,0,0,0,,,,2012-08-30 08:00,2012-08-30 16:00,,2012-07-17 08:00,2012-07-17 16:00,2012-07-17 08:00,2012-07-17 16:00,2012-07-17 08:00,2012-07-17 16:00,,2012-08-30 08:00,2012-08-30 16:00,,PT_Normal,,,,,jOT2hOO7HEuyl1fPogORTw,,,,N,0,0,,,2012-05-05 12:17,2012-05-16 14:02,admin,admin
678,130128,3769,19991,3746,1,0,N,N,N,CP_Drtn,TT_Task,DT_FixedDUR2,RV_OK,TK_NotStart,H-1-450,Slab form works inspection,,352,0,8,0,0,0,8,0,0,0,,,,2012-08-25 08:00,2012-08-25 16:00,,2012-07-12 08:00,2012-07-12 16:00,2012-07-12 08:00,2012-07-12 16:00,2012-07-12 08:00,2012-07-12 16:00,,2012-08-25 08:00,2012-08-25 16:00,,PT_Normal,,,,,AjZl7ja9XE6IEfmsg/O1NA,,,,N,0,0,,,2012-05-05 12:17,2012-05-16 14:02,admin,admin
679,130129,3769,19991,3746,1,0,N,N,N,CP_Drtn,TT_Task,DT_FixedDUR2,RV_OK,TK_NotStart,H-1-490,Slab steel works inspection,,352,0,8,0,0,0,8,0,0,0,,,,2012-08-30 08:00,2012-08-30 16:00,,2012-07-17 08:00,2012-07-17 16:00,2012-07-17 08:00,2012-07-17 16:00,2012-07-17 08:00,2012-07-17 16:00,,2012-08-30 08:00,2012-08-30 16:00,,PT_Normal,,,,,MBFdavDTaECn1heBadszSQ,jhoEa2Q1G0GVVrzUdcVFFQ,,,N,0,0,,,2012-05-05 12:17,2012-05-16 14:02,admin,admin
680,130130,3769,20018,3746,1,0,N,N,N,CP_Drtn,TT_Task,DT_FixedDUR2,RV_OK,TK_NotStart,H-1-560,Columns steel works ISPECTION,,352,0,8,0,0,0,8,0,0,0,,,,2012-09-11 08:00,2012-09-11 16:00,,2012-07-29 08:00,2012-07-29 16:00,2012-07-29 08:00,2012-07-29 16:00,2012-07-29 08:00,2012-07-29 16:00,,2012-09-11 08:00,2012-09-11 16:00,,PT_Normal,,,,,SyFXp+AxA0eYyFeP1JnVbg,6n7AX9RjjkSxAEuJ66FWIg,,,N,0,0,,,2012-05-05 12:17,2012-05-16 14:02,admin,admin
681,130131,3769,20018,3746,1,0,N,N,N,CP_Drtn,TT_Task,DT_FixedDUR2,RV_OK,TK_NotStart,H-1-570,Engineer Release Pouring,,352,0,8,0,0,0,8,0,0,0,,,,2012-09-11 08:00,2012-09-11 16:00,,2012-07-29 08:00,2012-07-29 16:00,2012-07-29 08:00,2012-07-29 16:00,2012-07-29 08:00,2012-07-29 16:00,,2012-09-11 08:00,2012-09-11 16:00,,PT_Normal,,,,,1imQ/4O82kKrspYrtjfOCw,H6Vd2ZH+yEy+uR/l2IA7mg,,,N,0,0,,,2012-05-05 12:17,2012-05-16 14:02,admin,admin
682,130132,3769,20018,3746,1,0,N,N,N,CP_Drtn,TT_Task,DT_FixedDUR2,RV_OK,TK_NotStart,H-1-620,Engineer Release Pouring,,352,0,8,0,0,0,8,0,0,0,,,,2012-09-28 08:00,2012-09-28 16:00,,2012-08-15 08:00,2012-08-15 16:00,2012-08-15 08:00,2012-08-15 16:00,2012-08-15 08:00,2012-08-15 16:00,,2012-09-28 08:00,2012-09-28 16:00,,PT_Normal,,,,,TeJBlzRWHkOra5+NrgDXnQ,ltjl5iCNjkKlA8+XRU8xbQ,,,N,0,0,,,2012-05-05 12:17,2012-05-16 14:02,admin,admin
683,130133,3769,20018,3746,1,0,N,N,N,CP_Drtn,TT_Task,DT_FixedDUR2,RV_OK,TK_NotStart,H-1-600,Slab form works inspection,,352,0,8,0,0,0,8,0,0,0,,,,2012-09-23 08:00,2012-09-23 16:00,,2012-08-10 08:00,2012-08-10 16:00,2012-08-10 08:00,2012-08-10 16:00,2012-08-10 08:00,2012-08-10 16:00,,2012-09-23 08:00,2012-09-23 16:00,,PT_Normal,,,,,zF12TaibvEiY//SYao3TsQ,5g4n91anRky2KjKR3hxK+g,,,N,0,0,,,2012-05-05 12:17,2012-05-16 14:02,admin,admin
684,130134,3769,20018,3746,1,0,N,N,N,CP_Drtn,TT_Task,DT_FixedDUR2,RV_OK,TK_NotStart,H-1-630,Slab steel works inspection,,352,0,8,0,0,0,8,0,0,0,,,,2012-09-28 08:00,2012-09-28 16:00,,2012-08-15 08:00,2012-08-15 16:00,2012-08-15 08:00,2012-08-15 16:00,2012-08-15 08:00,2012-08-15 16:00,,2012-09-28 08:00,2012-09-28 16:00,,PT_Normal,,,,,9ErZEd7hzECDi9YHWo4uyg,plMBSOgquUSTRuss4x2m+Q,,,N,0,0,,,2012-05-05 12:17,2012-05-16 14:02,admin,admin
685,130135,3769,20002,3746,1,0,N,N,N,CP_Drtn,TT_Task,DT_FixedDUR2,RV_OK,TK_NotStart,H-2-130,Columns steel works ISPECTION,,532,0,8,0,0,0,8,0,0,0,,,,2012-08-06 08:00,2012-08-06 16:00,,2012-05-31 12:00,2012-06-01 12:00,2012-05-31 12:00,2012-06-01 12:00,2012-05-31 12:00,2012-06-01 12:00,,2012-08-06 08:00,2012-08-06 16:00,,PT_Normal,,,,,X03fciMMHkqqmgpf9X6oBg,6n7AX9RjjkSxAEuJ66FWIg,,,N,0,0,,,2012-05-05 12:17,2012-05-16 14:02,admin,admin
686,130136,3769,20002,3746,1,0,N,N,N,CP_Drtn,TT_Task,DT_FixedDUR2,RV_OK,TK_NotStart,H-2-140,Engineer Release Pouring,,532,0,8,0,0,0,8,0,0,0,,,,2012-08-06 08:00,2012-08-06 16:00,,2012-05-31 12:00,2012-06-01 12:00,2012-05-31 12:00,2012-06-01 12:00,2012-05-31 12:00,2012-06-01 12:00,,2012-08-06 08:00,2012-08-06 16:00,,PT_Normal,,,,,4ll2ETsX2UiGz9T84Y05Ug,H6Vd2ZH+yEy+uR/l2IA7mg,,,N,0,0,,,2012-05-05 12:17,2012-05-16 14:02,admin,admin
687,130137,3769,20002,3746,1,0,N,N,N,CP_Drtn,TT_Task,DT_FixedDUR2,RV_OK,TK_NotStart,H-2-190,Engineer Release Pouring,,532,0,8,0,0,0,8,0,0,0,,,,2012-08-19 08:00,2012-08-19 16:00,,2012-06-13 12:00,2012-06-14 12:00,2012-06-13 12:00,2012-06-14 12:00,2012-06-13 12:00,2012-06-14 12:00,,2012-08-19 08:00,2012-08-19 16:00,,PT_Normal,,,,,jBc/sbJaRUWkmsr8/F5RtA,ltjl5iCNjkKlA8+XRU8xbQ,,,N,0,0,,,2012-05-05 12:17,2012-05-16 14:02,admin,admin
688,130138,3769,20002,3746,1,0,N,N,N,CP_Drtn,TT_Task,DT_FixedDUR2,RV_OK,TK_NotStart,H-2-170,Slab form works inspection,,532,0,8,0,0,0,8,0,0,0,,,,2012-08-15 08:00,2012-08-15 16:00,,2012-06-09 12:00,2012-06-10 12:00,2012-06-09 12:00,2012-06-10 12:00,2012-06-09 12:00,2012-06-10 12:00,,2012-08-15 08:00,2012-08-15 16:00,,PT_Normal,,,,,9kb5ceS73UeqlyzC3IU+fQ,5g4n91anRky2KjKR3hxK+g,,,N,0,0,,,2012-05-05 12:17,2012-05-16 14:02,admin,admin
689,130139,3769,20002,3746,1,0,N,N,N,CP_Drtn,TT_Task,DT_FixedDUR2,RV_OK,TK_NotStart,H-2-200,Slab steel works inspection,,532,0,8,0,0,0,8,0,0,0,,,,2012-08-19 08:00,2012-08-19 16:00,,2012-06-13 12:00,2012-06-14 12:00,2012-06-13 12:00,2012-06-14 12:00,2012-06-13 12:00,2012-06-14 12:00,,2012-08-19 08:00,2012-08-19 16:00,,PT_Normal,,,,,PCMb83/I0EW4svyS2lPzbw,plMBSOgquUSTRuss4x2m+Q,,,N,0,0,,,2012-05-05 12:17,2012-05-16 14:02,admin,admin
690,130140,3769,19994,3746,1,0,N,N,N,CP_Drtn,TT_Task,DT_FixedDUR2,RV_OK,TK_NotStart,H-2-260,Columns steel works ISPECTION,,532,0,8,0,0,0,8,0,0,0,,,,2012-08-28 08:00,2012-08-28 16:00,,2012-06-22 12:00,2012-06-23 12:00,2012-06-22 12:00,2012-06-23 12:00,2012-06-22 12:00,2012-06-23 12:00,,2012-08-28 08:00,2012-08-28 16:00,,PT_Normal,,,,,8r1tfJavXUGBXVrI0zPoFg,6n7AX9RjjkSxAEuJ66FWIg,,,N,0,0,,,2012-05-05 12:17,2012-05-16 14:02,admin,admin
691,130141,3769,19994,3746,1,0,N,N,N,CP_Drtn,TT_Task,DT_FixedDUR2,RV_OK,TK_NotStart,H-2-270,Engineer Release Pouring,,916,916,8,0,0,0,8,0,0,0,,,,2012-10-15 08:00,2012-10-15 16:00,,2012-06-22 12:00,2012-06-23 12:00,2012-06-22 12:00,2012-06-23 12:00,2012-06-22 12:00,2012-06-23 12:00,,2012-10-15 08:00,2012-10-15 16:00,,PT_Normal,,,,,/x/TiwuFl0qK+eKJBouh2A,H6Vd2ZH+yEy+uR/l2IA7mg,,,N,0,0,,,2012-05-05 12:17,2012-05-16 14:02,admin,admin
692,130142,3769,19994,3746,1,0,N,N,N,CP_Drtn,TT_Task,DT_FixedDUR2,RV_OK,TK_NotStart,H-2-330,Engineer Release Pouring,,812,812,8,0,0,0,8,0,0,0,,,,2012-10-15 08:00,2012-10-15 16:00,,2012-07-05 12:00,2012-07-06 12:00,2012-07-05 12:00,2012-07-06 12:00,2012-07-05 12:00,2012-07-06 12:00,,2012-10-15 08:00,2012-10-15 16:00,,PT_Normal,,,,,V21aNtKx6UK9o23KRVjTRA,ltjl5iCNjkKlA8+XRU8xbQ,,,N,0,0,,,2012-05-05 12:17,2012-05-16 14:02,admin,admin
693,130143,3769,19994,3746,1,0,N,N,N,CP_Drtn,TT_Task,DT_FixedDUR2,RV_OK,TK_NotStart,H-2-310,Slab form works inspection,,532,0,8,0,0,0,8,0,0,0,,,,2012-09-06 08:00,2012-09-06 16:00,,2012-07-01 12:00,2012-07-02 12:00,2012-07-01 12:00,2012-07-02 12:00,2012-07-01 12:00,2012-07-02 12:00,,2012-09-06 08:00,2012-09-06 16:00,,PT_Normal,,,,,60IA7vppI0GxBqHfifrckw,5g4n91anRky2KjKR3hxK+g,,,N,0,0,,,2012-05-05 12:17,2012-05-16 14:02,admin,admin
694,130144,3769,19994,3746,1,0,N,N,N,CP_Drtn,TT_Task,DT_FixedDUR2,RV_OK,TK_NotStart,H-2-340,Slab steel works inspection,,532,0,8,0,0,0,8,0,0,0,,,,2012-09-10 08:00,2012-09-10 16:00,,2012-07-05 12:00,2012-07-06 12:00,2012-07-05 12:00,2012-07-06 12:00,2012-07-05 12:00,2012-07-06 12:00,,2012-09-10 08:00,2012-09-10 16:00,,PT_Normal,,,,,PW3AA8XsHkmyFct51KFSJQ,plMBSOgquUSTRuss4x2m+Q,,,N,0,0,,,2012-05-05 12:17,2012-05-16 14:02,admin,admin
695,130145,3769,20007,3746,1,0,N,N,N,CP_Drtn,TT_Task,DT_FixedDUR2,RV_OK,TK_NotStart,H-2-420,Columns steel works ISPECTION,,532,0,8,0,0,0,8,0,0,0,,,,2012-09-18 08:00,2012-09-18 16:00,,2012-07-13 12:00,2012-07-14 12:00,2012-07-13 12:00,2012-07-14 12:00,2012-07-13 12:00,2012-07-14 12:00,,2012-09-18 08:00,2012-09-18 16:00,,PT_Normal,,,,,l4W98oXZvkeaak0nzX5yEw,6n7AX9RjjkSxAEuJ66FWIg,,,N,0,0,,,2012-05-05 12:17,2012-05-16 14:02,admin,admin
696,130146,3769,20007,3746,1,0,N,N,N,CP_Drtn,TT_Task,DT_FixedDUR2,RV_OK,TK_NotStart,H-2-430,Engineer Release Pouring,,748,748,8,0,0,0,8,0,0,0,,,,2012-10-15 08:00,2012-10-15 16:00,,2012-07-13 12:00,2012-07-14 12:00,2012-07-13 12:00,2012-07-14 12:00,2012-07-13 12:00,2012-07-14 12:00,,2012-10-15 08:00,2012-10-15 16:00,,PT_Normal,,,,,tLsDu+vAZkWNC2kXZavJhQ,H6Vd2ZH+yEy+uR/l2IA7mg,,,N,0,0,,,2012-05-05 12:17,2012-05-16 14:02,admin,admin
697,130147,3769,20007,3746,1,0,N,N,N,CP_Drtn,TT_Task,DT_FixedDUR2,RV_OK,TK_NotStart,H-2-480,Engineer Release Pouring,,652,652,8,0,0,0,8,0,0,0,,,,2012-10-15 08:00,2012-10-15 16:00,,2012-07-25 12:00,2012-07-26 12:00,2012-07-25 12:00,2012-07-26 12:00,2012-07-25 12:00,2012-07-26 12:00,,2012-10-15 08:00,2012-10-15 16:00,,PT_Normal,,,,,Cwz96jhQ60a6U4+LocH19g,ltjl5iCNjkKlA8+XRU8xbQ,,,N,0,0,,,2012-05-05 12:17,2012-05-16 14:02,admin,admin
698,130148,3769,20007,3746,1,0,N,N,N,CP_Drtn,TT_Task,DT_FixedDUR2,RV_OK,TK_NotStart,H-2-460,Slab form works inspection,,532,0,8,0,0,0,8,0,0,0,,,,2012-09-26 08:00,2012-09-26 16:00,,2012-07-21 12:00,2012-07-22 12:00,2012-07-21 12:00,2012-07-22 12:00,2012-07-21 12:00,2012-07-22 12:00,,2012-09-26 08:00,2012-09-26 16:00,,PT_Normal,,,,,G2iq5IoW1E+Vn9yToo83yA,5g4n91anRky2KjKR3hxK+g,,,N,0,0,,,2012-05-05 12:17,2012-05-16 14:02,admin,admin
699,130149,3769,20007,3746,1,0,N,N,N,CP_Drtn,TT_Task,DT_FixedDUR2,RV_OK,TK_NotStart,H-2-490,Slab steel works inspection,,532,0,8,0,0,0,8,0,0,0,,,,2012-09-30 08:00,2012-09-30 16:00,,2012-07-25 12:00,2012-07-26 12:00,2012-07-25 12:00,2012-07-26 12:00,2012-07-25 12:00,2012-07-26 12:00,,2012-09-30 08:00,2012-09-30 16:00,,PT_Normal,,,,,6003cAClM0mt4OeHXdOV4g,plMBSOgquUSTRuss4x2m+Q,,,N,0,0,,,2012-05-05 12:17,2012-05-16 14:02,admin,admin
700,130150,3769,20010,3746,1,100,N,N,N,CP_Drtn,TT_Task,DT_FixedDUR2,RV_OK,TK_Complete,H-3-130,Columns steel works ISPECTION,,,,0,0,0,0,8,0,0,0,,2012-04-15 00:00,2012-04-15 00:00,,,,,,,,2012-05-21 08:00,2012-05-21 16:00,,,,,PT_Normal,,,,,wBkwPMR8pk+IcahH074x6Q,6n7AX9RjjkSxAEuJ66FWIg,,,N,0,0,,,2012-05-05 12:17,2012-05-16 14:02,admin,admin
701,130151,3769,20010,3746,1,100,N,N,N,CP_Drtn,TT_Task,DT_FixedDUR2,RV_OK,TK_Complete,H-3-140,Engineer Release Pouring,,,,0,0,0,0,8,0,0,0,,2012-04-15 00:00,2012-04-15 00:00,,,,,,,,2012-04-30 08:00,2012-04-30 16:00,,,,,PT_Normal,,,,,xFEp2oC8dEeuwsh+erbKTw,H6Vd2ZH+yEy+uR/l2IA7mg,,,N,0,0,,,2012-05-05 12:17,2012-05-16 14:02,admin,admin
702,130152,3769,20010,3746,1,100,N,N,N,CP_Drtn,TT_Task,DT_FixedDUR2,RV_OK,TK_Complete,H-3-190,Engineer Release Pouring,,,,0,0,0,0,8,0,0,0,,2012-04-25 00:00,2012-04-25 00:00,,,,,,,,2012-04-30 08:00,2012-04-30 16:00,,,,,PT_Normal,,,,,P6byDjFLeE6sr9YFkR40IA,ltjl5iCNjkKlA8+XRU8xbQ,,,N,0,0,,,2012-05-05 12:17,2012-05-16 14:02,admin,admin
703,130153,3769,20010,3746,1,100,N,N,N,CP_Drtn,TT_Task,DT_FixedDUR2,RV_OK,TK_Complete,H-3-170,Slab form works inspection,,,,0,0,0,0,8,0,0,0,,2012-04-22 00:00,2012-04-22 00:00,,,,,,,,2012-06-06 08:00,2012-06-06 16:00,,,,,PT_Normal,,,,,Q3uz/RjvKkW3F+c/7hpOiA,5g4n91anRky2KjKR3hxK+g,,,N,0,0,,,2012-05-05 12:17,2012-05-16 14:02,admin,admin
704,130154,3769,20010,3746,1,100,N,N,N,CP_Drtn,TT_Task,DT_FixedDUR2,RV_OK,TK_Complete,H-3-200,Slab steel works inspection,,,,0,0,0,0,8,0,0,0,,2012-04-25 00:00,2012-04-25 00:00,,,,,,,,2012-06-11 08:00,2012-06-11 16:00,,,,,PT_Normal,,,,,yv3QHZk8U0CijqH1POqCCQ,plMBSOgquUSTRuss4x2m+Q,,,N,0,0,,,2012-05-05 12:17,2012-05-16 14:02,admin,admin
705,130155,3769,20038,3746,1,100,N,N,N,CP_Drtn,TT_Task,DT_FixedDUR2,RV_OK,TK_Complete,H-3-260,Columns steel works ISPECTION,,,,0,0,0,0,8,0,0,0,,2012-05-01 00:00,2012-05-01 00:00,,,,,,,,2012-05-09 13:36,2012-05-10 13:36,,,,,PT_Normal,,,,,Kj+LuArHp0acKTRXPkhbgQ,6n7AX9RjjkSxAEuJ66FWIg,,,N,0,0,,,2012-05-05 12:17,2012-05-16 14:02,admin,admin
706,130156,3769,20038,3746,1,100,N,N,N,CP_Drtn,TT_Task,DT_FixedDUR2,RV_OK,TK_Complete,H-3-270,Engineer Release Pouring,,,,0,0,0,0,8,0,0,0,,2012-05-01 00:00,2012-05-01 00:00,,,,,,,,2012-05-15 08:00,2012-05-15 16:00,,,,,PT_Normal,,,,,rICBCkHhukq/MwXPgg7ZMA,H6Vd2ZH+yEy+uR/l2IA7mg,,,N,0,0,,,2012-05-05 12:17,2012-05-16 14:02,admin,admin
707,130157,3769,20038,3746,1,100,N,N,N,CP_Drtn,TT_Task,DT_FixedDUR2,RV_OK,TK_Complete,H-3-340,Engineer Release Pouring,,,,0,0,0,0,8,0,0,0,,2012-05-10 00:00,2012-05-10 00:00,,,,,,,,2012-06-01 08:00,2012-06-01 16:00,,,,,PT_Normal,,,,,BiUqd5ghAEmI3MaDr6863w,ltjl5iCNjkKlA8+XRU8xbQ,,,N,0,0,,,2012-05-05 12:17,2012-05-16 14:02,admin,admin
708,130158,3769,20038,3746,1,100,N,N,N,CP_Drtn,TT_Task,DT_FixedDUR2,RV_OK,TK_Complete,H-3-310,Slab form works inspection,,,,0,0,0,0,8,0,0,0,,2012-05-07 00:00,2012-05-07 00:00,,,,,,,,2012-05-27 08:00,2012-05-27 16:00,,,,,PT_Normal,,,,,HarZoBJH0Ui+hA33o/jaZw,5g4n91anRky2KjKR3hxK+g,,,N,0,0,,,2012-05-05 12:17,2012-05-16 14:02,admin,admin
709,130159,3769,20038,3746,1,100,N,N,N,CP_Drtn,TT_Task,DT_FixedDUR2,RV_OK,TK_Complete,H-3-350,Slab steel works inspection,,,,0,0,0,0,8,0,0,0,,2012-05-10 00:00,2012-05-10 00:00,,,,,,,,2012-06-01 08:00,2012-06-01 16:00,,,,,PT_Normal,,,,,VFbRtYhDU063wrVp+TkBlQ,plMBSOgquUSTRuss4x2m+Q,,,N,0,0,,,2012-05-05 12:17,2012-05-16 14:02,admin,admin
710,130160,3769,20015,3746,1,0,N,N,N,CP_Drtn,TT_Task,DT_FixedDUR2,RV_OK,TK_NotStart,H-3-420,Columns steel works ISPECTION,,736,0,8,0,0,0,8,0,0,0,,,,2012-09-05 08:00,2012-09-05 16:00,,2012-06-05 08:00,2012-06-05 16:00,2012-06-05 08:00,2012-06-05 16:00,2012-06-05 08:00,2012-06-05 16:00,,2012-09-05 08:00,2012-09-05 16:00,,PT_Normal,,,,,Pogb7Am100+a3VUIVK44bw,6n7AX9RjjkSxAEuJ66FWIg,,,N,0,0,,,2012-05-05 12:17,2012-05-16 14:02,admin,admin
711,130161,3769,20015,3746,1,0,N,N,N,CP_Drtn,TT_Task,DT_FixedDUR2,RV_OK,TK_NotStart,H-3-430,Engineer Release Pouring,,1056,1056,8,0,0,0,8,0,0,0,,,,2012-10-15 08:00,2012-10-15 16:00,,2012-06-05 08:00,2012-06-05 16:00,2012-06-05 08:00,2012-06-05 16:00,2012-06-05 08:00,2012-06-05 16:00,,2012-10-15 08:00,2012-10-15 16:00,,PT_Normal,,,,,H7faU2qrrU6rXIbXnaYXpA,H6Vd2ZH+yEy+uR/l2IA7mg,,,N,0,0,,,2012-05-05 12:17,2012-05-16 14:02,admin,admin
712,130162,3769,20015,3746,1,0,N,N,N,CP_Drtn,TT_Task,DT_FixedDUR2,RV_OK,TK_NotStart,H-3-480,Engineer Release Pouring,,880,880,8,0,0,0,8,0,0,0,,,,2012-10-15 08:00,2012-10-15 16:00,,2012-06-27 08:00,2012-06-27 16:00,2012-06-27 08:00,2012-06-27 16:00,2012-06-27 08:00,2012-06-27 16:00,,2012-10-15 08:00,2012-10-15 16:00,,PT_Normal,,,,,OP5+p1CsBUCpvzgufWsQRg,ltjl5iCNjkKlA8+XRU8xbQ,,,N,0,0,,,2012-05-05 12:17,2012-05-16 14:02,admin,admin
713,130163,3769,20015,3746,1,0,N,N,N,CP_Drtn,TT_Task,DT_FixedDUR2,RV_OK,TK_NotStart,H-3-460,Slab form works inspection,,736,0,8,0,0,0,8,0,0,0,,,,2012-09-22 08:00,2012-09-22 16:00,,2012-06-22 08:00,2012-06-22 16:00,2012-06-22 08:00,2012-06-22 16:00,2012-06-22 08:00,2012-06-22 16:00,,2012-09-22 08:00,2012-09-22 16:00,,PT_Normal,,,,,vjW0ggOW2E+h99399Gvyfg,5g4n91anRky2KjKR3hxK+g,,,N,0,0,,,2012-05-05 12:17,2012-05-16 14:02,admin,admin
714,130164,3769,20015,3746,1,0,N,N,N,CP_Drtn,TT_Task,DT_FixedDUR2,RV_OK,TK_NotStart,H-3-490,Slab steel works inspection,,736,0,8,0,0,0,8,0,0,0,,,,2012-09-27 08:00,2012-09-27 16:00,,2012-06-27 08:00,2012-06-27 16:00,2012-06-27 08:00,2012-06-27 16:00,2012-06-27 08:00,2012-06-27 16:00,,2012-09-27 08:00,2012-09-27 16:00,,PT_Normal,,,,,XJFb0wBweE6Jw9gcglUkOw,plMBSOgquUSTRuss4x2m+Q,,,N,0,0,,,2012-05-05 12:17,2012-05-16 14:02,admin,admin
715,130165,3769,19999,3746,1,100,N,N,N,CP_Drtn,TT_Task,DT_FixedDUR2,RV_OK,TK_Complete,H-4-130,Columns steel works ISPECTION,,,,0,0,0,0,8,0,0,0,,2012-04-19 00:00,2012-04-19 00:00,,,,,,,,2012-05-07 08:00,2012-05-07 16:00,,,,,PT_Normal,,,,,cJj04L1sVEaFdDRMRNlyQA,6n7AX9RjjkSxAEuJ66FWIg,,,N,0,0,,,2012-05-05 12:17,2012-05-16 14:02,admin,admin
716,130166,3769,19999,3746,1,100,N,N,N,CP_Drtn,TT_Task,DT_FixedDUR2,RV_OK,TK_Complete,H-4-140,Engineer Release Pouring,,,,0,0,0,0,8,0,0,0,,2012-04-19 00:00,2012-04-19 00:00,,,,,,,,2012-05-12 08:00,2012-05-12 16:00,,,,,PT_Normal,,,,,wEI3cUFDX0i7z+BrXb/0yw,H6Vd2ZH+yEy+uR/l2IA7mg,,,N,0,0,,,2012-05-05 12:17,2012-05-16 14:02,admin,admin
717,130167,3769,19999,3746,1,0,N,N,N,CP_Drtn,TT_Task,DT_FixedDUR2,RV_OK,TK_NotStart,H-4-190,Engineer Release Pouring,,1216,1216,8,0,0,0,8,0,0,0,,,,2012-10-15 08:00,2012-10-15 16:00,,2012-05-16 08:00,2012-05-16 16:00,2012-05-16 08:00,2012-05-16 16:00,2012-05-16 08:00,2012-05-16 16:00,,2012-10-15 08:00,2012-10-15 16:00,,PT_Normal,,,,,WYhl4QSYx0mRlvpM2/+JcQ,ltjl5iCNjkKlA8+XRU8xbQ,,,N,0,0,,,2012-05-05 12:17,2012-05-16 14:02,admin,admin
718,130168,3769,19999,3746,1,100,N,N,N,CP_Drtn,TT_Task,DT_FixedDUR2,RV_OK,TK_Complete,H-4-170,Slab form works inspection,,,,0,0,0,0,8,0,0,0,,2012-05-09 00:00,2012-05-09 00:00,,,,,,,,2012-05-27 08:00,2012-05-27 16:00,,,,,PT_Normal,,,,,6YoNGNPW70egejlXufHXew,5g4n91anRky2KjKR3hxK+g,,,N,0,0,,,2012-05-05 12:17,2012-05-16 14:02,admin,admin
719,130169,3769,19999,3746,1,100,N,N,N,CP_Drtn,TT_Task,DT_FixedDUR2,RV_OK,TK_Complete,H-4-200,Slab steel works inspection,,,,0,0,0,0,8,0,0,0,,2012-05-12 00:00,2012-05-12 00:00,,,,,,,,2012-06-01 08:00,2012-06-01 16:00,,,,,PT_Normal,,,,,EqtIt35dYEaw/+KjSWDnsg,plMBSOgquUSTRuss4x2m+Q,,,N,0,0,,,2012-05-05 12:17,2012-05-16 14:02,admin,admin
720,130170,3769,20000,3746,1,0,N,N,N,CP_Drtn,TT_Task,DT_FixedDUR2,RV_OK,TK_NotStart,H-4-260,Columns steel works ISPECTION,,536,0,8,0,0,0,8,0,0,0,,,,2012-07-31 08:00,2012-07-31 16:00,,2012-05-25 08:00,2012-05-25 16:00,2012-05-25 08:00,2012-05-25 16:00,2012-05-25 08:00,2012-05-25 16:00,,2012-07-31 08:00,2012-07-31 16:00,,PT_Normal,,,,,R4evzezS70WYbZj7TojVDA,6n7AX9RjjkSxAEuJ66FWIg,,,N,0,0,,,2012-05-05 12:17,2012-05-16 14:02,admin,admin
721,130171,3769,20000,3746,1,0,N,N,N,CP_Drtn,TT_Task,DT_FixedDUR2,RV_OK,TK_NotStart,H-4-270,Engineer Release Pouring,,1144,1144,8,0,0,0,8,0,0,0,,,,2012-10-15 08:00,2012-10-15 16:00,,2012-05-25 08:00,2012-05-25 16:00,2012-05-25 08:00,2012-05-25 16:00,2012-05-25 08:00,2012-05-25 16:00,,2012-10-15 08:00,2012-10-15 16:00,,PT_Normal,,,,,7AFzY2j9pkKWZWG3B3JZUw,H6Vd2ZH+yEy+uR/l2IA7mg,,,N,0,0,,,2012-05-05 12:17,2012-05-16 14:02,admin,admin
722,130172,3769,20000,3746,1,0,N,N,N,CP_Drtn,TT_Task,DT_FixedDUR2,RV_OK,TK_NotStart,H-4-340,Engineer Release Pouring,,968,968,8,0,0,0,8,0,0,0,,,,2012-10-15 08:00,2012-10-15 16:00,,2012-06-16 08:00,2012-06-16 16:00,2012-06-16 08:00,2012-06-16 16:00,2012-06-16 08:00,2012-06-16 16:00,,2012-10-15 08:00,2012-10-15 16:00,,PT_Normal,,,,,lG1ctzN8ekWLwxl5ObQ+QQ,ltjl5iCNjkKlA8+XRU8xbQ,,,N,0,0,,,2012-05-05 12:17,2012-05-16 14:02,admin,admin
723,130173,3769,20000,3746,1,0,N,N,N,CP_Drtn,TT_Task,DT_FixedDUR2,RV_OK,TK_NotStart,H-4-310,Slab form works inspection,,536,0,8,0,0,0,8,0,0,0,,,,2012-08-17 08:00,2012-08-17 16:00,,2012-06-11 08:00,2012-06-11 16:00,2012-06-11 08:00,2012-06-11 16:00,2012-06-11 08:00,2012-06-11 16:00,,2012-08-17 08:00,2012-08-17 16:00,,PT_Normal,,,,,5U0QDXt2iE23mWz+klLTEA,5g4n91anRky2KjKR3hxK+g,,,N,0,0,,,2012-05-05 12:17,2012-05-16 14:02,admin,admin
724,130174,3769,20000,3746,1,0,N,N,N,CP_Drtn,TT_Task,DT_FixedDUR2,RV_OK,TK_NotStart,H-4-350,Slab steel works inspection,,536,0,8,0,0,0,8,0,0,0,,,,2012-08-22 08:00,2012-08-22 16:00,,2012-06-16 08:00,2012-06-16 16:00,2012-06-16 08:00,2012-06-16 16:00,2012-06-16 08:00,2012-06-16 16:00,,2012-08-22 08:00,2012-08-22 16:00,,PT_Normal,,,,,nYFjuzYKpk66gcOdYfiuDg,plMBSOgquUSTRuss4x2m+Q,,,N,0,0,,,2012-05-05 12:17,2012-05-16 14:02,admin,admin
725,130175,3769,20023,3746,1,0,N,N,N,CP_Drtn,TT_Task,DT_FixedDUR2,RV_OK,TK_NotStart,H-4-420,Columns steel works ISPECTION,,536,0,8,0,0,0,8,0,0,0,,,,2012-09-05 08:00,2012-09-05 16:00,,2012-06-30 08:00,2012-06-30 16:00,2012-06-30 08:00,2012-06-30 16:00,2012-06-30 08:00,2012-06-30 16:00,,2012-09-05 08:00,2012-09-05 16:00,,PT_Normal,,,,,YJKRKvDHyUe7wu45izRonA,6n7AX9RjjkSxAEuJ66FWIg,,,N,0,0,,,2012-05-05 12:17,2012-05-16 14:02,admin,admin
726,130176,3769,20023,3746,1,0,N,N,N,CP_Drtn,TT_Task,DT_FixedDUR2,RV_OK,TK_NotStart,H-4-430,Engineer Release Pouring,,856,856,8,0,0,0,8,0,0,0,,,,2012-10-15 08:00,2012-10-15 16:00,,2012-06-30 08:00,2012-06-30 16:00,2012-06-30 08:00,2012-06-30 16:00,2012-06-30 08:00,2012-06-30 16:00,,2012-10-15 08:00,2012-10-15 16:00,,PT_Normal,,,,,De9XogfWZUWv1A8JXXshjQ,H6Vd2ZH+yEy+uR/l2IA7mg,,,N,0,0,,,2012-05-05 12:17,2012-05-16 14:02,admin,admin
727,130177,3769,20023,3746,1,0,N,N,N,CP_Drtn,TT_Task,DT_FixedDUR2,RV_OK,TK_NotStart,H-4-480,Engineer Release Pouring,,680,680,8,0,0,0,8,0,0,0,,,,2012-10-15 08:00,2012-10-15 16:00,,2012-07-22 08:00,2012-07-22 16:00,2012-07-22 08:00,2012-07-22 16:00,2012-07-22 08:00,2012-07-22 16:00,,2012-10-15 08:00,2012-10-15 16:00,,PT_Normal,,,,,J8yQtVphrESyW8DIBF5iTw,ltjl5iCNjkKlA8+XRU8xbQ,,,N,0,0,,,2012-05-05 12:17,2012-05-16 14:02,admin,admin
728,130178,3769,20023,3746,1,0,N,N,N,CP_Drtn,TT_Task,DT_FixedDUR2,RV_OK,TK_NotStart,H-4-460,Slab form works inspection,,536,0,8,0,0,0,8,0,0,0,,,,2012-09-22 08:00,2012-09-22 16:00,,2012-07-17 08:00,2012-07-17 16:00,2012-07-17 08:00,2012-07-17 16:00,2012-07-17 08:00,2012-07-17 16:00,,2012-09-22 08:00,2012-09-22 16:00,,PT_Normal,,,,,4gkzv+iEfU+xLztnNeH/3g,5g4n91anRky2KjKR3hxK+g,,,N,0,0,,,2012-05-05 12:17,2012-05-16 14:02,admin,admin
729,130179,3769,20023,3746,1,0,N,N,N,CP_Drtn,TT_Task,DT_FixedDUR2,RV_OK,TK_NotStart,H-4-490,Slab steel works inspection,,536,0,8,0,0,0,8,0,0,0,,,,2012-09-27 08:00,2012-09-27 16:00,,2012-07-22 08:00,2012-07-22 16:00,2012-07-22 08:00,2012-07-22 16:00,2012-07-22 08:00,2012-07-22 16:00,,2012-09-27 08:00,2012-09-27 16:00,,PT_Normal,,,,,EDSGkKqthUi6GLqfgXBmMg,plMBSOgquUSTRuss4x2m+Q,,,N,0,0,,,2012-05-05 12:17,2012-05-16 14:02,admin,admin
730,130180,3769,19990,3746,1,100,N,N,N,CP_Drtn,TT_Task,DT_FixedDUR2,RV_OK,TK_Complete,H-5-130,Columns steel works ISPECTION,,,,0,0,0,0,8,0,0,0,,2012-04-13 00:00,2012-04-13 00:00,,,,,,,,2012-05-22 08:00,2012-05-22 16:00,,,,,PT_Normal,,,,,y3UJONznmUSlf8dJHC6TlA,6n7AX9RjjkSxAEuJ66FWIg,,,N,0,0,,,2012-05-05 12:17,2012-05-16 14:02,admin,admin
731,130181,3769,19990,3746,1,100,N,N,N,CP_Drtn,TT_Task,DT_FixedDUR2,RV_OK,TK_Complete,H-5-140,Engineer Release Pouring,,,,0,0,0,0,8,0,0,0,,2012-04-14 00:00,2012-04-14 00:00,,,,,,,,2012-05-22 08:00,2012-05-22 16:00,,,,,PT_Normal,,,,,TXyjNokPfkegeLCRk/+kaw,H6Vd2ZH+yEy+uR/l2IA7mg,,,N,0,0,,,2012-05-05 12:17,2012-05-16 14:02,admin,admin
732,130182,3769,19990,3746,1,100,N,N,N,CP_Drtn,TT_Task,DT_FixedDUR2,RV_OK,TK_Complete,H-5-190,Engineer Release Pouring,,,,0,0,0,0,8,0,0,0,,2012-04-23 00:00,2012-04-23 00:00,,,,,,,,2012-05-07 08:00,2012-05-07 16:00,,,,,PT_Normal,,,,,a5Hs2CVrRkCYkvXIBBH03w,ltjl5iCNjkKlA8+XRU8xbQ,,,N,0,0,,,2012-05-05 12:17,2012-05-16 14:02,admin,admin
733,130183,3769,19990,3746,1,100,N,N,N,CP_Drtn,TT_Task,DT_FixedDUR2,RV_OK,TK_Complete,H-5-170,Slab form works inspection,,,,0,0,0,0,8,0,0,0,,2012-04-19 00:00,2012-04-19 00:00,,,,,,,,2012-06-07 08:00,2012-06-07 16:00,,,,,PT_Normal,,,,,Z8nOMW8JS0+JeM101v+57w,5g4n91anRky2KjKR3hxK+g,,,N,0,0,,,2012-05-05 12:17,2012-05-16 14:02,admin,admin
734,130184,3769,19990,3746,1,100,N,N,N,CP_Drtn,TT_Task,DT_FixedDUR2,RV_OK,TK_Complete,H-5-200,Slab steel works inspection,,,,0,0,0,0,8,0,0,0,,2012-04-22 00:00,2012-04-22 00:00,,,,,,,,2012-06-12 08:00,2012-06-12 16:00,,,,,PT_Normal,,,,,2zx0lmrAYki+uCejWJSJcw,plMBSOgquUSTRuss4x2m+Q,,,N,0,0,,,2012-05-05 12:17,2012-05-16 14:02,admin,admin
735,130185,3769,20008,3746,1,100,N,N,N,CP_Drtn,TT_Task,DT_FixedDUR2,RV_OK,TK_Complete,H-5-260,Columns steel works ISPECTION,,,,0,0,0,0,8,0,0,0,,2012-05-02 00:00,2012-05-02 00:00,,,,,,,,2012-05-15 12:00,2012-05-16 12:00,,,,,PT_Normal,,,,,keWZk/BVO0K/LYBqu6bf9g,6n7AX9RjjkSxAEuJ66FWIg,,,N,0,0,,,2012-05-05 12:17,2012-05-16 14:02,admin,admin
736,130186,3769,20008,3746,1,100,N,N,N,CP_Drtn,TT_Task,DT_FixedDUR2,RV_OK,TK_Complete,H-5-270,Engineer Release Pouring,,,,0,0,0,0,8,0,0,0,,2012-05-03 00:00,2012-05-03 00:00,,,,,,,,2012-05-12 08:00,2012-05-12 16:00,,,,,PT_Normal,,,,,skmV2WVqWki92fwbUo5ymA,H6Vd2ZH+yEy+uR/l2IA7mg,,,N,0,0,,,2012-05-05 12:17,2012-05-16 14:02,admin,admin
737,130187,3769,20008,3746,1,100,N,N,N,CP_Drtn,TT_Task,DT_FixedDUR2,RV_OK,TK_Complete,H-5-340,Engineer Release Pouring,,,,0,0,0,0,8,0,0,0,,2012-05-11 00:00,2012-05-11 00:00,,,,,,,,2012-06-02 08:00,2012-06-02 16:00,,,,,PT_Normal,,,,,ULtPqMERyE6g6M6iCRGFSA,ltjl5iCNjkKlA8+XRU8xbQ,,,N,0,0,,,2012-05-05 12:17,2012-05-16 14:02,admin,admin
738,130188,3769,20008,3746,1,100,N,N,N,CP_Drtn,TT_Task,DT_FixedDUR2,RV_OK,TK_Complete,H-5-310,Slab form works inspection,,,,0,0,0,0,8,0,0,0,,2012-05-09 00:00,2012-05-09 00:00,,,,,,,,2012-05-28 08:00,2012-05-28 16:00,,,,,PT_Normal,,,,,gSpr7kj2k0OU8oELIHArFQ,5g4n91anRky2KjKR3hxK+g,,,N,0,0,,,2012-05-05 12:17,2012-05-16 14:02,admin,admin
739,130189,3769,20008,3746,1,100,N,N,N,CP_Drtn,TT_Task,DT_FixedDUR2,RV_OK,TK_Complete,H-5-350,Slab steel works inspection,,,,0,0,0,0,8,0,0,0,,2012-05-11 00:00,2012-05-11 00:00,,,,,,,,2012-06-02 08:00,2012-06-02 16:00,,,,,PT_Normal,,,,,MpwTePEh60KQqAeoYWDoJg,plMBSOgquUSTRuss4x2m+Q,,,N,0,0,,,2012-05-05 12:17,2012-05-16 14:02,admin,admin
740,130190,3769,20031,3746,1,0,N,N,N,CP_Drtn,TT_Task,DT_FixedDUR2,RV_OK,TK_NotStart,H-5-420,Columns steel works ISPECTION,,736,0,8,0,0,0,8,0,0,0,,,,2012-09-05 08:00,2012-09-05 16:00,,2012-06-05 08:00,2012-06-05 16:00,2012-06-05 08:00,2012-06-05 16:00,2012-06-05 08:00,2012-06-05 16:00,,2012-09-05 08:00,2012-09-05 16:00,,PT_Normal,,,,,XVrtY+JCcEiAkHMlqjITJA,6n7AX9RjjkSxAEuJ66FWIg,,,N,0,0,,,2012-05-05 12:17,2012-05-16 14:02,admin,admin
741,130191,3769,20031,3746,1,0,N,N,N,CP_Drtn,TT_Task,DT_FixedDUR2,RV_OK,TK_NotStart,H-5-430,Engineer Release Pouring,,1056,1056,8,0,0,0,8,0,0,0,,,,2012-10-15 08:00,2012-10-15 16:00,,2012-06-05 08:00,2012-06-05 16:00,2012-06-05 08:00,2012-06-05 16:00,2012-06-05 08:00,2012-06-05 16:00,,2012-10-15 08:00,2012-10-15 16:00,,PT_Normal,,,,,9O1S7X6luEWJZsK2u+tzQA,H6Vd2ZH+yEy+uR/l2IA7mg,,,N,0,0,,,2012-05-05 12:17,2012-05-16 14:02,admin,admin
742,130192,3769,20031,3746,1,0,N,N,N,CP_Drtn,TT_Task,DT_FixedDUR2,RV_OK,TK_NotStart,H-5-480,Engineer Release Pouring,,880,880,8,0,0,0,8,0,0,0,,,,2012-10-15 08:00,2012-10-15 16:00,,2012-06-27 08:00,2012-06-27 16:00,2012-06-27 08:00,2012-06-27 16:00,2012-06-27 08:00,2012-06-27 16:00,,2012-10-15 08:00,2012-10-15 16:00,,PT_Normal,,,,,Y4t4ry1BxEesYeA9lfFrrw,ltjl5iCNjkKlA8+XRU8xbQ,,,N,0,0,,,2012-05-05 12:17,2012-05-16 14:02,admin,admin
743,130193,3769,20031,3746,1,0,N,N,N,CP_Drtn,TT_Task,DT_FixedDUR2,RV_OK,TK_NotStart,H-5-460,Slab form works inspection,,736,0,8,0,0,0,8,0,0,0,,,,2012-09-22 08:00,2012-09-22 16:00,,2012-06-22 08:00,2012-06-22 16:00,2012-06-22 08:00,2012-06-22 16:00,2012-06-22 08:00,2012-06-22 16:00,,2012-09-22 08:00,2012-09-22 16:00,,PT_Normal,,,,,reEuPZCB10K4VbWG7afJiQ,5g4n91anRky2KjKR3hxK+g,,,N,0,0,,,2012-05-05 12:17,2012-05-16 14:02,admin,admin
744,130194,3769,20031,3746,1,0,N,N,N,CP_Drtn,TT_Task,DT_FixedDUR2,RV_OK,TK_NotStart,H-5-490,Slab steel works inspection,,736,0,8,0,0,0,8,0,0,0,,,,2012-09-27 08:00,2012-09-27 16:00,,2012-06-27 08:00,2012-06-27 16:00,2012-06-27 08:00,2012-06-27 16:00,2012-06-27 08:00,2012-06-27 16:00,,2012-09-27 08:00,2012-09-27 16:00,,PT_Normal,,,,,N8oqvI7O2kSt1dF1bvko5g,plMBSOgquUSTRuss4x2m+Q,,,N,0,0,,,2012-05-05 12:17,2012-05-16 14:02,admin,admin
745,130195,3769,19993,3746,1,100,N,N,N,CP_Drtn,TT_Task,DT_FixedDUR2,RV_OK,TK_Complete,H-6-130,Columns steel works ISPECTION,,,,0,0,0,0,8,0,0,0,,2012-04-23 00:00,2012-04-23 00:00,,,,,,,,2012-05-08 08:00,2012-05-08 16:00,,,,,PT_Normal,,,,,dau3fzptMEWVTkE3ZFQpqQ,6n7AX9RjjkSxAEuJ66FWIg,,,N,0,0,,,2012-05-05 12:17,2012-05-16 14:02,admin,admin
746,130196,3769,19993,3746,1,100,N,N,N,CP_Drtn,TT_Task,DT_FixedDUR2,RV_OK,TK_Complete,H-6-140,Engineer Release Pouring,,,,0,0,0,0,8,0,0,0,,2012-04-23 00:00,2012-04-23 00:00,,,,,,,,2012-05-07 08:00,2012-05-07 16:00,,,,,PT_Normal,,,,,w5T+uFUhuEWD0o5we5iQIQ,H6Vd2ZH+yEy+uR/l2IA7mg,,,N,0,0,,,2012-05-05 12:17,2012-05-16 14:02,admin,admin
747,130197,3769,19993,3746,1,100,N,N,N,CP_Drtn,TT_Task,DT_FixedDUR2,RV_OK,TK_Complete,H-6-190,Engineer Release Pouring,,,,0,0,0,0,8,0,0,0,,2012-05-02 00:00,2012-05-02 00:00,,,,,,,,2012-05-27 09:36,2012-05-28 09:36,,,,,PT_Normal,,,,,PEcwcgpf5kGkQOCD411o4A,ltjl5iCNjkKlA8+XRU8xbQ,,,N,0,0,,,2012-05-05 12:17,2012-05-16 14:02,admin,admin
748,130198,3769,19993,3746,1,100,N,N,N,CP_Drtn,TT_Task,DT_FixedDUR2,RV_OK,TK_Complete,H-6-170,Slab form works inspection,,,,0,0,0,0,8,0,0,0,,2012-04-29 00:00,2012-04-29 00:00,,,,,,,,2012-05-22 09:36,2012-05-23 09:36,,,,,PT_Normal,,,,,/p1M0cdUNkyVnb8ZyQPrqQ,5g4n91anRky2KjKR3hxK+g,,,N,0,0,,,2012-05-05 12:17,2012-05-16 14:02,admin,admin
749,130199,3769,19993,3746,1,100,N,N,N,CP_Drtn,TT_Task,DT_FixedDUR2,RV_OK,TK_Complete,H-6-200,Slab steel works inspection,,,,0,0,0,0,8,0,0,0,,2012-05-02 00:00,2012-05-02 00:00,,,,,,,,2012-05-27 09:36,2012-05-28 09:36,,,,,PT_Normal,,,,,3aAIQK9WyEGdMBXkmdnmbw,plMBSOgquUSTRuss4x2m+Q,,,N,0,0,,,2012-05-05 12:17,2012-05-16 14:02,admin,admin
750,130200,3769,19992,3746,1,0,N,N,N,CP_Drtn,TT_Task,DT_FixedDUR2,RV_OK,TK_NotStart,H-6-260,Columns steel works ISPECTION,,1213.6,0,8,0,0,0,8,0,0,0,,,,2012-10-15 08:00,2012-10-15 16:00,,2012-05-16 10:24,2012-05-17 10:24,2012-05-16 10:24,2012-05-17 10:24,2012-05-16 10:24,2012-05-17 10:24,,2012-10-15 08:00,2012-10-15 16:00,,PT_Normal,,,,,/N3gXQbT3Eqe1SWCQoTYuQ,6n7AX9RjjkSxAEuJ66FWIg,,,N,0,0,,,2012-05-05 12:17,2012-05-16 14:02,admin,admin
751,130201,3769,19992,3746,1,0,N,N,N,CP_Drtn,TT_Task,DT_FixedDUR2,RV_OK,TK_NotStart,H-6-270,Engineer Release Pouring,,1213.6,1213.6,8,0,0,0,8,0,0,0,,,,2012-10-15 08:00,2012-10-15 16:00,,2012-05-16 10:24,2012-05-17 10:24,2012-05-16 10:24,2012-05-17 10:24,2012-05-16 10:24,2012-05-17 10:24,,2012-10-15 08:00,2012-10-15 16:00,,PT_Normal,,,,,7WMOrkF7M0+emT75+MCTvw,H6Vd2ZH+yEy+uR/l2IA7mg,,,N,0,0,,,2012-05-05 12:17,2012-05-16 14:02,admin,admin
752,130202,3769,19992,3746,1,0,N,N,N,CP_Drtn,TT_Task,DT_FixedDUR2,RV_OK,TK_NotStart,H-6-340,Engineer Release Pouring,,1200,1200,8,0,0,0,8,0,0,0,,,,2012-10-15 08:00,2012-10-15 16:00,,2012-05-18 08:00,2012-05-18 16:00,2012-05-18 08:00,2012-05-18 16:00,2012-05-18 08:00,2012-05-18 16:00,,2012-10-15 08:00,2012-10-15 16:00,,PT_Normal,,,,,Z9N/wwgbZ0CxIFirAaUjqA,ltjl5iCNjkKlA8+XRU8xbQ,,,N,0,0,,,2012-05-05 12:17,2012-05-16 14:02,admin,admin
753,130203,3769,19992,3746,1,0,N,N,N,CP_Drtn,TT_Task,DT_FixedDUR2,RV_OK,TK_NotStart,H-6-310,Slab form works inspection,,1180,1180,8,0,0,0,8,0,0,0,,,,2012-10-15 08:00,2012-10-15 16:00,,2012-05-20 12:00,2012-05-21 12:00,2012-05-20 12:00,2012-05-21 12:00,2012-05-20 12:00,2012-05-21 12:00,,2012-10-15 08:00,2012-10-15 16:00,,PT_Normal,,,,,DD6tUvL5Ak2BmyfjptmWfw,5g4n91anRky2KjKR3hxK+g,,,N,0,0,,,2012-05-05 12:17,2012-05-16 14:02,admin,admin
754,130204,3769,19992,3746,1,0,N,N,N,CP_Drtn,TT_Task,DT_FixedDUR2,RV_OK,TK_NotStart,H-6-350,Slab steel works inspection,,768,0,8,0,0,0,8,0,0,0,,,,2012-08-22 08:00,2012-08-22 16:00,,2012-05-18 08:00,2012-05-18 16:00,2012-05-18 08:00,2012-05-18 16:00,2012-05-18 08:00,2012-05-18 16:00,,2012-08-22 08:00,2012-08-22 16:00,,PT_Normal,,,,,H0s4vqewF0WJnh0L1Fcx1w,plMBSOgquUSTRuss4x2m+Q,,,N,0,0,,,2012-05-05 12:17,2012-05-16 14:02,admin,admin
755,130205,3769,20017,3746,1,0,N,N,N,CP_Drtn,TT_Task,DT_FixedDUR2,RV_OK,TK_NotStart,H-6-420,Columns steel works ISPECTION,,736,0,8,0,0,0,8,0,0,0,,,,2012-09-05 08:00,2012-09-05 16:00,,2012-06-05 08:00,2012-06-05 16:00,2012-06-05 08:00,2012-06-05 16:00,2012-06-05 08:00,2012-06-05 16:00,,2012-09-05 08:00,2012-09-05 16:00,,PT_Normal,,,,,sHhNbSq5VU+2jy9A9INEyw,6n7AX9RjjkSxAEuJ66FWIg,,,N,0,0,,,2012-05-05 12:17,2012-05-16 14:02,admin,admin
756,130206,3769,20017,3746,1,0,N,N,N,CP_Drtn,TT_Task,DT_FixedDUR2,RV_OK,TK_NotStart,H-6-430,Engineer Release Pouring,,1056,1056,8,0,0,0,8,0,0,0,,,,2012-10-15 08:00,2012-10-15 16:00,,2012-06-05 08:00,2012-06-05 16:00,2012-06-05 08:00,2012-06-05 16:00,2012-06-05 08:00,2012-06-05 16:00,,2012-10-15 08:00,2012-10-15 16:00,,PT_Normal,,,,,X2HQ6ESu9EywG2kPowOXxQ,H6Vd2ZH+yEy+uR/l2IA7mg,,,N,0,0,,,2012-05-05 12:17,2012-05-16 14:02,admin,admin
757,130207,3769,20017,3746,1,0,N,N,N,CP_Drtn,TT_Task,DT_FixedDUR2,RV_OK,TK_NotStart,H-6-480,Engineer Release Pouring,,880,880,8,0,0,0,8,0,0,0,,,,2012-10-15 08:00,2012-10-15 16:00,,2012-06-27 08:00,2012-06-27 16:00,2012-06-27 08:00,2012-06-27 16:00,2012-06-27 08:00,2012-06-27 16:00,,2012-10-15 08:00,2012-10-15 16:00,,PT_Normal,,,,,7uWFGCFetUyKiIIyMMWvrQ,ltjl5iCNjkKlA8+XRU8xbQ,,,N,0,0,,,2012-05-05 12:17,2012-05-16 14:02,admin,admin
758,130208,3769,20017,3746,1,0,N,N,N,CP_Drtn,TT_Task,DT_FixedDUR2,RV_OK,TK_NotStart,H-6-460,Slab form works inspection,,736,0,8,0,0,0,8,0,0,0,,,,2012-09-22 08:00,2012-09-22 16:00,,2012-06-22 08:00,2012-06-22 16:00,2012-06-22 08:00,2012-06-22 16:00,2012-06-22 08:00,2012-06-22 16:00,,2012-09-22 08:00,2012-09-22 16:00,,PT_Normal,,,,,cI0yYjjwO0CJYTcUgRZklA,5g4n91anRky2KjKR3hxK+g,,,N,0,0,,,2012-05-05 12:17,2012-05-16 14:02,admin,admin
759,130209,3769,20017,3746,1,0,N,N,N,CP_Drtn,TT_Task,DT_FixedDUR2,RV_OK,TK_NotStart,H-6-490,Slab steel works inspection,,736,0,8,0,0,0,8,0,0,0,,,,2012-09-27 08:00,2012-09-27 16:00,,2012-06-27 08:00,2012-06-27 16:00,2012-06-27 08:00,2012-06-27 16:00,2012-06-27 08:00,2012-06-27 16:00,,2012-09-27 08:00,2012-09-27 16:00,,PT_Normal,,,,,2XW9z+yv9UiXYJIdxAAhsA,plMBSOgquUSTRuss4x2m+Q,,,N,0,0,,,2012-05-05 12:17,2012-05-16 14:02,admin,admin
760,130210,3769,20004,3746,1,0,N,N,N,CP_Drtn,TT_Task,DT_FixedDUR2,RV_OK,TK_NotStart,H-7-130,Columns steel works ISPECTION,,0,0,8,0,0,0,8,0,0,0,,,,2012-06-29 08:00,2012-06-29 16:00,,2012-06-29 08:00,2012-06-29 16:00,2012-06-29 08:00,2012-06-29 16:00,2012-06-29 08:00,2012-06-29 16:00,,2012-06-29 08:00,2012-06-29 16:00,,PT_Normal,,,,,6NTOiiCzh0+tOUd99G9J3g,6n7AX9RjjkSxAEuJ66FWIg,,,Y,0,0,,,2012-05-05 12:17,2012-05-16 14:02,admin,admin
761,130211,3769,20004,3746,1,0,N,N,N,CP_Drtn,TT_Task,DT_FixedDUR2,RV_OK,TK_NotStart,H-7-140,Engineer Release Pouring,,864,864,8,0,0,0,8,0,0,0,,,,2012-10-15 08:00,2012-10-15 16:00,,2012-06-29 08:00,2012-06-29 16:00,2012-06-29 08:00,2012-06-29 16:00,2012-06-29 08:00,2012-06-29 16:00,,2012-10-15 08:00,2012-10-15 16:00,,PT_Normal,,,,,BKtgXlaCjkqDeWlzyYSSkw,H6Vd2ZH+yEy+uR/l2IA7mg,,,N,0,0,,,2012-05-05 12:17,2012-05-16 14:02,admin,admin
762,130212,3769,20004,3746,1,0,N,N,N,CP_Drtn,TT_Task,DT_FixedDUR2,RV_OK,TK_NotStart,H-7-190,Engineer Release Pouring,,688,688,8,0,0,0,8,0,0,0,,,,2012-10-15 08:00,2012-10-15 16:00,,2012-07-21 08:00,2012-07-21 16:00,2012-07-21 08:00,2012-07-21 16:00,2012-07-21 08:00,2012-07-21 16:00,,2012-10-15 08:00,2012-10-15 16:00,,PT_Normal,,,,,ykTdikHqhkOHOABR8WfmiA,ltjl5iCNjkKlA8+XRU8xbQ,,,N,0,0,,,2012-05-05 12:17,2012-05-16 14:02,admin,admin
763,130213,3769,20004,3746,1,0,N,N,N,CP_Drtn,TT_Task,DT_FixedDUR2,RV_OK,TK_NotStart,H-7-170,Slab form works inspection,,0,0,8,0,0,0,8,0,0,0,,,,2012-07-16 08:00,2012-07-16 16:00,,2012-07-16 08:00,2012-07-16 16:00,2012-07-16 08:00,2012-07-16 16:00,2012-07-16 08:00,2012-07-16 16:00,,2012-07-16 08:00,2012-07-16 16:00,,PT_Normal,,,,,goCSbDZgQUig/IM3S0wINw,5g4n91anRky2KjKR3hxK+g,,,Y,0,0,,,2012-05-05 12:17,2012-05-16 14:02,admin,admin
764,130214,3769,20004,3746,1,0,N,N,N,CP_Drtn,TT_Task,DT_FixedDUR2,RV_OK,TK_NotStart,H-7-200,Slab steel works inspection,,0,0,8,0,0,0,8,0,0,0,,,,2012-07-21 08:00,2012-07-21 16:00,,2012-07-21 08:00,2012-07-21 16:00,2012-07-21 08:00,2012-07-21 16:00,2012-07-21 08:00,2012-07-21 16:00,,2012-07-21 08:00,2012-07-21 16:00,,PT_Normal,,,,,tbG0Y2haWUWMO9SzRGMZ+A,plMBSOgquUSTRuss4x2m+Q,,,Y,0,0,,,2012-05-05 12:17,2012-05-16 14:02,admin,admin
765,130215,3769,20005,3746,1,0,N,N,N,CP_Drtn,TT_Task,DT_FixedDUR2,RV_OK,TK_NotStart,H-7-260,Columns steel works ISPECTION,,0,0,8,0,0,0,8,0,0,0,,,,2012-07-31 08:00,2012-07-31 16:00,,2012-07-31 08:00,2012-07-31 16:00,2012-07-31 08:00,2012-07-31 16:00,2012-07-31 08:00,2012-07-31 16:00,,2012-07-31 08:00,2012-07-31 16:00,,PT_Normal,,,,,bN7quZynpkihBIxrht7cLA,6n7AX9RjjkSxAEuJ66FWIg,,,Y,0,0,,,2012-05-05 12:17,2012-05-16 14:02,admin,admin
766,130216,3769,20005,3746,1,0,N,N,N,CP_Drtn,TT_Task,DT_FixedDUR2,RV_OK,TK_NotStart,H-7-270,Engineer Release Pouring,,608,608,8,0,0,0,8,0,0,0,,,,2012-10-15 08:00,2012-10-15 16:00,,2012-07-31 08:00,2012-07-31 16:00,2012-07-31 08:00,2012-07-31 16:00,2012-07-31 08:00,2012-07-31 16:00,,2012-10-15 08:00,2012-10-15 16:00,,PT_Normal,,,,,6IziX/pf3EqRgkOEQ4pQVw,H6Vd2ZH+yEy+uR/l2IA7mg,,,N,0,0,,,2012-05-05 12:17,2012-05-16 14:02,admin,admin
767,130217,3769,20005,3746,1,0,N,N,N,CP_Drtn,TT_Task,DT_FixedDUR2,RV_OK,TK_NotStart,H-7-340,Engineer Release Pouring,,432,432,8,0,0,0,8,0,0,0,,,,2012-10-15 08:00,2012-10-15 16:00,,2012-08-22 08:00,2012-08-22 16:00,2012-08-22 08:00,2012-08-22 16:00,2012-08-22 08:00,2012-08-22 16:00,,2012-10-15 08:00,2012-10-15 16:00,,PT_Normal,,,,,HybhatoAj063W60rHnYqCg,ltjl5iCNjkKlA8+XRU8xbQ,,,N,0,0,,,2012-05-05 12:17,2012-05-16 14:02,admin,admin
768,130218,3769,20005,3746,1,0,N,N,N,CP_Drtn,TT_Task,DT_FixedDUR2,RV_OK,TK_NotStart,H-7-310,Slab form works inspection,,0,0,8,0,0,0,8,0,0,0,,,,2012-08-17 08:00,2012-08-17 16:00,,2012-08-17 08:00,2012-08-17 16:00,2012-08-17 08:00,2012-08-17 16:00,2012-08-17 08:00,2012-08-17 16:00,,2012-08-17 08:00,2012-08-17 16:00,,PT_Normal,,,,,eY2QYa3yW0WBcLHa+oXJjQ,5g4n91anRky2KjKR3hxK+g,,,Y,0,0,,,2012-05-05 12:17,2012-05-16 14:02,admin,admin
769,130219,3769,20005,3746,1,0,N,N,N,CP_Drtn,TT_Task,DT_FixedDUR2,RV_OK,TK_NotStart,H-7-350,Slab steel works inspection,,0,0,8,0,0,0,8,0,0,0,,,,2012-08-22 08:00,2012-08-22 16:00,,2012-08-22 08:00,2012-08-22 16:00,2012-08-22 08:00,2012-08-22 16:00,2012-08-22 08:00,2012-08-22 16:00,,2012-08-22 08:00,2012-08-22 16:00,,PT_Normal,,,,,7gY6IU/ot0+UgWSlsgbNrg,plMBSOgquUSTRuss4x2m+Q,,,Y,0,0,,,2012-05-05 12:17,2012-05-16 14:02,admin,admin
770,130220,3769,20006,3746,1,0,N,N,N,CP_Drtn,TT_Task,DT_FixedDUR2,RV_OK,TK_NotStart,H-7-420,Columns steel works ISPECTION,,0,0,8,0,0,0,8,0,0,0,,,,2012-09-05 08:00,2012-09-05 16:00,,2012-09-05 08:00,2012-09-05 16:00,2012-09-05 08:00,2012-09-05 16:00,2012-09-05 08:00,2012-09-05 16:00,,2012-09-05 08:00,2012-09-05 16:00,,PT_Normal,,,,,FuheqpJ4SkKuOSFeGXgWqQ,6n7AX9RjjkSxAEuJ66FWIg,,,Y,0,0,,,2012-05-05 12:17,2012-05-16 14:02,admin,admin
771,130221,3769,20006,3746,1,0,N,N,N,CP_Drtn,TT_Task,DT_FixedDUR2,RV_OK,TK_NotStart,H-7-430,Engineer Release Pouring,,320,320,8,0,0,0,8,0,0,0,,,,2012-10-15 08:00,2012-10-15 16:00,,2012-09-05 08:00,2012-09-05 16:00,2012-09-05 08:00,2012-09-05 16:00,2012-09-05 08:00,2012-09-05 16:00,,2012-10-15 08:00,2012-10-15 16:00,,PT_Normal,,,,,SH6D4lJF5kKQZCC2emqRqQ,H6Vd2ZH+yEy+uR/l2IA7mg,,,N,0,0,,,2012-05-05 12:17,2012-05-16 14:02,admin,admin
772,130222,3769,20006,3746,1,0,N,N,N,CP_Drtn,TT_Task,DT_FixedDUR2,RV_OK,TK_NotStart,H-7-480,Engineer Release Pouring,,144,144,8,0,0,0,8,0,0,0,,,,2012-10-15 08:00,2012-10-15 16:00,,2012-09-27 08:00,2012-09-27 16:00,2012-09-27 08:00,2012-09-27 16:00,2012-09-27 08:00,2012-09-27 16:00,,2012-10-15 08:00,2012-10-15 16:00,,PT_Normal,,,,,KWEIDlBv8U6zZUntvxG6DQ,ltjl5iCNjkKlA8+XRU8xbQ,,,N,0,0,,,2012-05-05 12:17,2012-05-16 14:02,admin,admin
773,130223,3769,20006,3746,1,0,N,N,N,CP_Drtn,TT_Task,DT_FixedDUR2,RV_OK,TK_NotStart,H-7-460,Slab form works inspection,,0,0,8,0,0,0,8,0,0,0,,,,2012-09-22 08:00,2012-09-22 16:00,,2012-09-22 08:00,2012-09-22 16:00,2012-09-22 08:00,2012-09-22 16:00,2012-09-22 08:00,2012-09-22 16:00,,2012-09-22 08:00,2012-09-22 16:00,,PT_Normal,,,,,8GuCWGin3EOIpAWGwqXOtw,5g4n91anRky2KjKR3hxK+g,,,Y,0,0,,,2012-05-05 12:17,2012-05-16 14:02,admin,admin
774,130224,3769,20006,3746,1,0,N,N,N,CP_Drtn,TT_Task,DT_FixedDUR2,RV_OK,TK_NotStart,H-7-490,Slab steel works inspection,,0,0,8,0,0,0,8,0,0,0,,,,2012-09-27 08:00,2012-09-27 16:00,,2012-09-27 08:00,2012-09-27 16:00,2012-09-27 08:00,2012-09-27 16:00,2012-09-27 08:00,2012-09-27 16:00,,2012-09-27 08:00,2012-09-27 16:00,,PT_Normal,,,,,idOqngY1IEOPgZzYdCdAsA,plMBSOgquUSTRuss4x2m+Q,,,Y,0,0,,,2012-05-05 12:17,2012-05-16 14:02,admin,admin
775,130225,3769,20012,3746,1,100,N,N,N,CP_Drtn,TT_Task,DT_FixedDUR2,RV_OK,TK_Complete,H-8-130,Columns steel works ISPECTION,,,,0,0,0,0,8,0,0,0,,2012-04-21 00:00,2012-04-21 00:00,,,,,,,,2012-05-17 08:00,2012-05-17 16:00,,,,,PT_Normal,,,,,RJ60Wsb0WU6C9kx3MyShaQ,6n7AX9RjjkSxAEuJ66FWIg,,,N,0,0,,,2012-05-05 12:17,2012-05-16 14:02,admin,admin
776,130226,3769,20012,3746,1,100,N,N,N,CP_Drtn,TT_Task,DT_FixedDUR2,RV_OK,TK_Complete,H-8-140,Engineer Release Pouring,,,,0,0,0,0,8,0,0,0,,2012-04-22 00:00,2012-04-22 00:00,,,,,,,,2012-05-17 08:00,2012-05-17 16:00,,,,,PT_Normal,,,,,RVLDFZMaGk+VdqVmeycsGg,H6Vd2ZH+yEy+uR/l2IA7mg,,,N,0,0,,,2012-05-05 12:17,2012-05-16 14:02,admin,admin
777,130227,3769,20012,3746,1,100,N,N,N,CP_Drtn,TT_Task,DT_FixedDUR2,RV_OK,TK_Complete,H-8-190,Engineer Release Pouring,,,,0,0,0,0,8,0,0,0,,2012-05-02 00:00,2012-05-02 00:00,,,,,,,,2012-05-09 11:12,2012-05-10 11:12,,,,,PT_Normal,,,,,D64KZ8UfRkO6iXhXt0WvLA,ltjl5iCNjkKlA8+XRU8xbQ,,,N,0,0,,,2012-05-05 12:17,2012-05-16 14:02,admin,admin
778,130228,3769,20012,3746,1,100,N,N,N,CP_Drtn,TT_Task,DT_FixedDUR2,RV_OK,TK_Complete,H-8-170,Slab form works inspection,,,,0,0,0,0,8,0,0,0,,2012-04-29 00:00,2012-04-29 00:00,,,,,,,,2012-06-03 08:00,2012-06-03 16:00,,,,,PT_Normal,,,,,EMedI83OS06aSDL0dSqPig,5g4n91anRky2KjKR3hxK+g,,,N,0,0,,,2012-05-05 12:17,2012-05-16 14:02,admin,admin
779,130229,3769,20012,3746,1,100,N,N,N,CP_Drtn,TT_Task,DT_FixedDUR2,RV_OK,TK_Complete,H-8-200,Slab steel works inspection,,,,0,0,0,0,8,0,0,0,,2012-05-01 00:00,2012-05-01 00:00,,,,,,,,2012-05-09 11:12,2012-05-10 11:12,,,,,PT_Normal,,,,,Y8u559HOWE2cC/my6a05hw,plMBSOgquUSTRuss4x2m+Q,,,N,0,0,,,2012-05-05 12:17,2012-05-16 14:02,admin,admin
780,130230,3769,20013,3746,1,100,N,N,N,CP_Drtn,TT_Task,DT_FixedDUR2,RV_OK,TK_Complete,H-8-260,Columns steel works ISPECTION,,,,0,0,0,0,8,0,0,0,,2012-05-11 00:00,2012-05-11 00:00,,,,,,,,2012-05-20 09:36,2012-05-21 09:36,,,,,PT_Normal,,,,,LbUcLwl1bEirP1foTlYVAg,6n7AX9RjjkSxAEuJ66FWIg,,,N,0,0,,,2012-05-05 12:17,2012-05-16 14:02,admin,admin
781,130231,3769,20013,3746,1,100,N,N,N,CP_Drtn,TT_Task,DT_FixedDUR2,RV_OK,TK_Complete,H-8-270,Engineer Release Pouring,,,,0,0,0,0,8,0,0,0,,2012-05-12 00:00,2012-05-12 00:00,,,,,,,,2012-05-23 08:00,2012-05-23 16:00,,,,,PT_Normal,,,,,+0B+xuTabEmBOC39a/eGNw,H6Vd2ZH+yEy+uR/l2IA7mg,,,N,0,0,,,2012-05-05 12:17,2012-05-16 14:02,admin,admin
782,130232,3769,20013,3746,1,0,N,N,N,CP_Drtn,TT_Task,DT_FixedDUR2,RV_OK,TK_NotStart,H-8-340,Engineer Release Pouring,,1116,1116,8,0,0,0,8,0,0,0,,,,2012-10-15 08:00,2012-10-15 16:00,,2012-05-28 12:00,2012-05-29 12:00,2012-05-28 12:00,2012-05-29 12:00,2012-05-28 12:00,2012-05-29 12:00,,2012-10-15 08:00,2012-10-15 16:00,,PT_Normal,,,,,0zSHmNVK/UWmd6DmAw6wYw,ltjl5iCNjkKlA8+XRU8xbQ,,,N,0,0,,,2012-05-05 12:17,2012-05-16 14:02,admin,admin
783,130233,3769,20013,3746,1,0,N,N,N,CP_Drtn,TT_Task,DT_FixedDUR2,RV_OK,TK_NotStart,H-8-310,Slab form works inspection,,684,0,8,0,0,0,8,0,0,0,,,,2012-08-17 08:00,2012-08-17 16:00,,2012-05-23 12:00,2012-05-24 12:00,2012-05-23 12:00,2012-05-24 12:00,2012-05-23 12:00,2012-05-24 12:00,,2012-08-17 08:00,2012-08-17 16:00,,PT_Normal,,,,,AESy0DF/P0ONgr38QbEGNg,5g4n91anRky2KjKR3hxK+g,,,N,0,0,,,2012-05-05 12:17,2012-05-16 14:02,admin,admin
784,130234,3769,20013,3746,1,0,N,N,N,CP_Drtn,TT_Task,DT_FixedDUR2,RV_OK,TK_NotStart,H-8-350,Slab steel works inspection,,684,0,8,0,0,0,8,0,0,0,,,,2012-08-22 08:00,2012-08-22 16:00,,2012-05-28 12:00,2012-05-29 12:00,2012-05-28 12:00,2012-05-29 12:00,2012-05-28 12:00,2012-05-29 12:00,,2012-08-22 08:00,2012-08-22 16:00,,PT_Normal,,,,,IIXgzCOoVUqwifmBn/710g,plMBSOgquUSTRuss4x2m+Q,,,N,0,0,,,2012-05-05 12:17,2012-05-16 14:02,admin,admin
785,130235,3769,20014,3746,1,0,N,N,N,CP_Drtn,TT_Task,DT_FixedDUR2,RV_OK,TK_NotStart,H-8-420,Columns steel works ISPECTION,,684,0,8,0,0,0,8,0,0,0,,,,2012-09-05 08:00,2012-09-05 16:00,,2012-06-11 12:00,2012-06-12 12:00,2012-06-11 12:00,2012-06-12 12:00,2012-06-11 12:00,2012-06-12 12:00,,2012-09-05 08:00,2012-09-05 16:00,,PT_Normal,,,,,O1aKZIJb3EChgjcYjfGnFQ,6n7AX9RjjkSxAEuJ66FWIg,,,N,0,0,,,2012-05-05 12:17,2012-05-16 14:02,admin,admin
786,130236,3769,20014,3746,1,0,N,N,N,CP_Drtn,TT_Task,DT_FixedDUR2,RV_OK,TK_NotStart,H-8-430,Engineer Release Pouring,,1004,1004,8,0,0,0,8,0,0,0,,,,2012-10-15 08:00,2012-10-15 16:00,,2012-06-11 12:00,2012-06-12 12:00,2012-06-11 12:00,2012-06-12 12:00,2012-06-11 12:00,2012-06-12 12:00,,2012-10-15 08:00,2012-10-15 16:00,,PT_Normal,,,,,BDBOxQdzdEyn9wFt/HmrAA,H6Vd2ZH+yEy+uR/l2IA7mg,,,N,0,0,,,2012-05-05 12:17,2012-05-16 14:02,admin,admin
787,130237,3769,20014,3746,1,0,N,N,N,CP_Drtn,TT_Task,DT_FixedDUR2,RV_OK,TK_NotStart,H-8-480,Engineer Release Pouring,,828,828,8,0,0,0,8,0,0,0,,,,2012-10-15 08:00,2012-10-15 16:00,,2012-07-03 12:00,2012-07-04 12:00,2012-07-03 12:00,2012-07-04 12:00,2012-07-03 12:00,2012-07-04 12:00,,2012-10-15 08:00,2012-10-15 16:00,,PT_Normal,,,,,f5dqsHppr0u75mjn8PItpA,ltjl5iCNjkKlA8+XRU8xbQ,,,N,0,0,,,2012-05-05 12:17,2012-05-16 14:02,admin,admin
788,130238,3769,20014,3746,1,0,N,N,N,CP_Drtn,TT_Task,DT_FixedDUR2,RV_OK,TK_NotStart,H-8-460,Slab form works inspection,,684,0,8,0,0,0,8,0,0,0,,,,2012-09-22 08:00,2012-09-22 16:00,,2012-06-28 12:00,2012-06-29 12:00,2012-06-28 12:00,2012-06-29 12:00,2012-06-28 12:00,2012-06-29 12:00,,2012-09-22 08:00,2012-09-22 16:00,,PT_Normal,,,,,yNFKqghic0Klw75hkPgLVA,5g4n91anRky2KjKR3hxK+g,,,N,0,0,,,2012-05-05 12:17,2012-05-16 14:02,admin,admin
789,130239,3769,20014,3746,1,0,N,N,N,CP_Drtn,TT_Task,DT_FixedDUR2,RV_OK,TK_NotStart,H-8-490,Slab steel works inspection,,684,0,8,0,0,0,8,0,0,0,,,,2012-09-27 08:00,2012-09-27 16:00,,2012-07-03 12:00,2012-07-04 12:00,2012-07-03 12:00,2012-07-04 12:00,2012-07-03 12:00,2012-07-04 12:00,,2012-09-27 08:00,2012-09-27 16:00,,PT_Normal,,,,,PrD0S1v3Hk29sl42hJbd9A,plMBSOgquUSTRuss4x2m+Q,,,N,0,0,,,2012-05-05 12:17,2012-05-16 14:02,admin,admin
790,130240,3769,20020,3746,1,100,N,N,N,CP_Drtn,TT_Task,DT_FixedDUR2,RV_OK,TK_Complete,H-9-130,Columns steel works ISPECTION,,,,0,0,0,0,8,0,0,0,,2012-04-24 00:00,2012-04-24 00:00,,,,,,,,2012-05-15 08:00,2012-05-15 16:00,,,,,PT_Normal,,,,,mpzTqpJkx02gmPksS+RarQ,6n7AX9RjjkSxAEuJ66FWIg,,,N,0,0,,,2012-05-05 12:17,2012-05-16 14:02,admin,admin
791,130241,3769,20020,3746,1,100,N,N,N,CP_Drtn,TT_Task,DT_FixedDUR2,RV_OK,TK_Complete,H-9-140,Engineer Release Pouring,,,,0,0,0,0,8,0,0,0,,2012-04-24 00:00,2012-04-24 00:00,,,,,,,,2012-05-15 08:00,2012-05-15 16:00,,,,,PT_Normal,,,,,+lvDMGF9F0akMfKfIr9AjQ,H6Vd2ZH+yEy+uR/l2IA7mg,,,N,0,0,,,2012-05-05 12:17,2012-05-16 14:02,admin,admin
792,130242,3769,20020,3746,1,0,N,N,N,CP_Drtn,TT_Task,DT_FixedDUR2,RV_OK,TK_NotStart,H-9-190,Engineer Release Pouring,,1216,1216,8,0,0,0,8,0,0,0,,,,2012-10-15 08:00,2012-10-15 16:00,,2012-05-16 08:00,2012-05-16 16:00,2012-05-16 08:00,2012-05-16 16:00,2012-05-16 08:00,2012-05-16 16:00,,2012-10-15 08:00,2012-10-15 16:00,,PT_Normal,,,,,fhoReR4jnEm/mlyGdJnVYA,ltjl5iCNjkKlA8+XRU8xbQ,,,N,0,0,,,2012-05-05 12:17,2012-05-16 14:02,admin,admin
793,130243,3769,20020,3746,1,100,N,N,N,CP_Drtn,TT_Task,DT_FixedDUR2,RV_OK,TK_Complete,H-9-170,Slab form works inspection,,,,0,0,0,0,8,0,0,0,,2012-05-07 00:00,2012-05-07 00:00,,,,,,,,2012-05-19 12:00,2012-05-20 12:00,,,,,PT_Normal,,,,,cvmCMKtjykeLhXnCYjkLqw,5g4n91anRky2KjKR3hxK+g,,,N,0,0,,,2012-05-05 12:17,2012-05-16 14:02,admin,admin
794,130244,3769,20020,3746,1,100,N,N,N,CP_Drtn,TT_Task,DT_FixedDUR2,RV_OK,TK_Complete,H-9-200,Slab steel works inspection,,,,0,0,0,0,8,0,0,0,,2012-05-11 00:00,2012-05-11 00:00,,,,,,,,2012-05-22 12:00,2012-05-23 12:00,,,,,PT_Normal,,,,,Zta3W4qeaUu0j3tdFu3yKg,plMBSOgquUSTRuss4x2m+Q,,,N,0,0,,,2012-05-05 12:17,2012-05-16 14:02,admin,admin
795,130245,3769,20021,3746,1,100,N,N,N,CP_Drtn,TT_Task,DT_FixedDUR2,RV_OK,TK_Complete,H-9-230,Columns form works ISPECTION,,,,0,0,0,0,8,0,0,0,,2012-05-13 00:00,2012-05-13 00:00,,,,,,,,2012-05-27 08:00,2012-05-27 16:00,,,,,PT_Normal,,,,,KRhMWmxGEkCcWB/gz68BlA,F7b3UvCALEK+ORsAt2L1hA,,,N,0,0,,,2012-05-05 12:17,2012-05-16 14:02,admin,admin
796,130246,3769,20021,3746,1,0,N,N,N,CP_Drtn,TT_Task,DT_FixedDUR2,RV_OK,TK_NotStart,H-9-260,Columns steel works ISPECTION,,608,0,8,0,0,0,8,0,0,0,,,,2012-07-31 08:00,2012-07-31 16:00,,2012-05-16 08:00,2012-05-16 16:00,2012-05-16 08:00,2012-05-16 16:00,2012-05-16 08:00,2012-05-16 16:00,,2012-07-31 08:00,2012-07-31 16:00,,PT_Normal,,,,,QDAU0Blf6UCF4eAGe+3G2A,tONdLte7OUOIuYL8hxXGvw,,,N,0,0,,,2012-05-05 12:17,2012-05-16 14:02,admin,admin
797,130247,3769,20021,3746,1,0,N,N,N,CP_Drtn,TT_Task,DT_FixedDUR2,RV_OK,TK_NotStart,H-9-270,Engineer Release Pouring,,1216,1216,8,0,0,0,8,0,0,0,,,,2012-10-15 08:00,2012-10-15 16:00,,2012-05-16 08:00,2012-05-16 16:00,2012-05-16 08:00,2012-05-16 16:00,2012-05-16 08:00,2012-05-16 16:00,,2012-10-15 08:00,2012-10-15 16:00,,PT_Normal,,,,,Bhs2qTdAEkCvCqC8ONMDFg,Yuazn5wrAUKGktlT1qYy9g,,,N,0,0,,,2012-05-05 12:17,2012-05-16 14:02,admin,admin
798,130248,3769,20021,3746,1,0,N,N,N,CP_Drtn,TT_Task,DT_FixedDUR2,RV_OK,TK_NotStart,H-9-340,Engineer Release Pouring,,992,992,8,0,0,0,8,0,0,0,,,,2012-10-15 08:00,2012-10-15 16:00,,2012-06-13 08:00,2012-06-13 16:00,2012-06-13 08:00,2012-06-13 16:00,2012-06-13 08:00,2012-06-13 16:00,,2012-10-15 08:00,2012-10-15 16:00,,PT_Normal,,,,,/PST8QDfTEOIV1aPgOMfXw,cIfvWtfscku+OqVgVtBkyQ,,,N,0,0,,,2012-05-05 12:17,2012-05-16 14:02,admin,admin
799,130249,3769,20021,3746,1,0,N,N,N,CP_Drtn,TT_Task,DT_FixedDUR2,RV_OK,TK_NotStart,H-9-310,Slab form works inspection,,560,0,8,0,0,0,8,0,0,0,,,,2012-08-17 08:00,2012-08-17 16:00,,2012-06-08 08:00,2012-06-08 16:00,2012-06-08 08:00,2012-06-08 16:00,2012-06-08 08:00,2012-06-08 16:00,,2012-08-17 08:00,2012-08-17 16:00,,PT_Normal,,,,,vlvZ1t74jk2TbhkUT1qCMg,LC74pSmZTEOTLSHC/zp9qw,,,N,0,0,,,2012-05-05 12:17,2012-05-16 14:02,admin,admin
800,130250,3769,20021,3746,1,0,N,N,N,CP_Drtn,TT_Task,DT_FixedDUR2,RV_OK,TK_NotStart,H-9-350,Slab steel works inspection,,560,0,8,0,0,0,8,0,0,0,,,,2012-08-22 08:00,2012-08-22 16:00,,2012-06-13 08:00,2012-06-13 16:00,2012-06-13 08:00,2012-06-13 16:00,2012-06-13 08:00,2012-06-13 16:00,,2012-08-22 08:00,2012-08-22 16:00,,PT_Normal,,,,,28U0mn4lZ0yJZiXbD0zSyA,4ZmrYMs/xEuywqYkKGx8+A,,,N,0,0,,,2012-05-05 12:17,2012-05-16 14:02,admin,admin
801,130251,3769,20022,3746,1,0,N,N,N,CP_Drtn,TT_Task,DT_FixedDUR2,RV_OK,TK_NotStart,H-9-400,Columns form works ISPECTION,,560,0,8,0,0,0,8,0,0,0,,,,2012-09-01 08:00,2012-09-01 16:00,,2012-06-23 08:00,2012-06-23 16:00,2012-06-23 08:00,2012-06-23 16:00,2012-06-23 08:00,2012-06-23 16:00,,2012-09-01 08:00,2012-09-01 16:00,,PT_Normal,,,,,eq+e5+/Pz02QvV9b5XpgAA,F7b3UvCALEK+ORsAt2L1hA,,,N,0,0,,,2012-05-05 12:17,2012-05-16 14:02,admin,admin
802,130252,3769,20022,3746,1,0,N,N,N,CP_Drtn,TT_Task,DT_FixedDUR2,RV_OK,TK_NotStart,H-9-420,Columns steel works ISPECTION,,560,0,8,0,0,0,8,0,0,0,,,,2012-09-05 08:00,2012-09-05 16:00,,2012-06-27 08:00,2012-06-27 16:00,2012-06-27 08:00,2012-06-27 16:00,2012-06-27 08:00,2012-06-27 16:00,,2012-09-05 08:00,2012-09-05 16:00,,PT_Normal,,,,,PJLYq0xdhkqoJZdO/7GQiQ,tONdLte7OUOIuYL8hxXGvw,,,N,0,0,,,2012-05-05 12:17,2012-05-16 14:02,admin,admin
803,130253,3769,20022,3746,1,0,N,N,N,CP_Drtn,TT_Task,DT_FixedDUR2,RV_OK,TK_NotStart,H-9-430,Engineer Release Pouring,,880,880,8,0,0,0,8,0,0,0,,,,2012-10-15 08:00,2012-10-15 16:00,,2012-06-27 08:00,2012-06-27 16:00,2012-06-27 08:00,2012-06-27 16:00,2012-06-27 08:00,2012-06-27 16:00,,2012-10-15 08:00,2012-10-15 16:00,,PT_Normal,,,,,1DZScRP3AU+MAYdPIHMZpQ,Yuazn5wrAUKGktlT1qYy9g,,,N,0,0,,,2012-05-05 12:17,2012-05-16 14:02,admin,admin
804,130254,3769,20022,3746,1,0,N,N,N,CP_Drtn,TT_Task,DT_FixedDUR2,RV_OK,TK_NotStart,H-9-480,Engineer Release Pouring,,704,704,8,0,0,0,8,0,0,0,,,,2012-10-15 08:00,2012-10-15 16:00,,2012-07-19 08:00,2012-07-19 16:00,2012-07-19 08:00,2012-07-19 16:00,2012-07-19 08:00,2012-07-19 16:00,,2012-10-15 08:00,2012-10-15 16:00,,PT_Normal,,,,,BRsvPmeEOUiwMAi7ejuNSw,cIfvWtfscku+OqVgVtBkyQ,,,N,0,0,,,2012-05-05 12:17,2012-05-16 14:02,admin,admin
805,130255,3769,20022,3746,1,0,N,N,N,CP_Drtn,TT_Task,DT_FixedDUR2,RV_OK,TK_NotStart,H-9-460,Slab form works inspection,,560,0,8,0,0,0,8,0,0,0,,,,2012-09-22 08:00,2012-09-22 16:00,,2012-07-14 08:00,2012-07-14 16:00,2012-07-14 08:00,2012-07-14 16:00,2012-07-14 08:00,2012-07-14 16:00,,2012-09-22 08:00,2012-09-22 16:00,,PT_Normal,,,,,OMYEXMxgOU+jVTPJtrGbuQ,LC74pSmZTEOTLSHC/zp9qw,,,N,0,0,,,2012-05-05 12:17,2012-05-16 14:02,admin,admin
806,130256,3769,20022,3746,1,0,N,N,N,CP_Drtn,TT_Task,DT_FixedDUR2,RV_OK,TK_NotStart,H-9-490,Slab steel works inspection,,560,0,8,0,0,0,8,0,0,0,,,,2012-09-27 08:00,2012-09-27 16:00,,2012-07-19 08:00,2012-07-19 16:00,2012-07-19 08:00,2012-07-19 16:00,2012-07-19 08:00,2012-07-19 16:00,,2012-09-27 08:00,2012-09-27 16:00,,PT_Normal,,,,,jBD3XAD0iUaCN5grtUB08g,4ZmrYMs/xEuywqYkKGx8+A,,,N,0,0,,,2012-05-05 12:17,2012-05-16 14:02,admin,admin
807,130257,3769,20028,3746,1,100,N,N,N,CP_Drtn,TT_Task,DT_FixedDUR2,RV_OK,TK_Complete,H-10-110,Columns form works ISPECTION,,,,0,0,0,0,8,0,0,0,,2012-04-20 00:00,2012-04-20 00:00,,,,,,,,2012-05-10 08:00,2012-05-10 16:00,,,,,PT_Normal,,,,,q8AqbawYZkagoThSx9aJQw,F7b3UvCALEK+ORsAt2L1hA,,,N,0,0,,,2012-05-05 12:17,2012-05-16 14:02,admin,admin
808,130258,3769,20028,3746,1,100,N,N,N,CP_Drtn,TT_Task,DT_FixedDUR2,RV_OK,TK_Complete,H-10-130,Columns steel works ISPECTION,,,,0,0,0,0,8,0,0,0,,2012-04-23 00:00,2012-04-23 00:00,,,,,,,,2012-05-14 08:00,2012-05-14 16:00,,,,,PT_Normal,,,,,i3W39xDoz060djNIqwA5bQ,tONdLte7OUOIuYL8hxXGvw,,,N,0,0,,,2012-05-05 12:17,2012-05-16 14:02,admin,admin
809,130259,3769,20028,3746,1,100,N,N,N,CP_Drtn,TT_Task,DT_FixedDUR2,RV_OK,TK_Complete,H-10-140,Engineer Release Pouring,,,,0,0,0,0,8,0,0,0,,2012-04-24 00:00,2012-04-24 00:00,,,,,,,,2012-05-14 08:00,2012-05-14 16:00,,,,,PT_Normal,,,,,B7pSsJn2jEWHTYMS7fAYDg,Yuazn5wrAUKGktlT1qYy9g,,,N,0,0,,,2012-05-05 12:17,2012-05-16 14:02,admin,admin
810,130260,3769,20028,3746,1,100,N,N,N,CP_Drtn,TT_Task,DT_FixedDUR2,RV_OK,TK_Complete,H-10-190,Engineer Release Pouring,,,,0,0,0,0,8,0,0,0,,2012-04-30 00:00,2012-04-30 00:00,,,,,,,,2012-05-27 08:00,2012-05-27 16:00,,,,,PT_Normal,,,,,Hh0B9nFtQ0qBefRpGrINbg,cIfvWtfscku+OqVgVtBkyQ,,,N,0,0,,,2012-05-05 12:17,2012-05-16 14:02,admin,admin
811,130261,3769,20028,3746,1,100,N,N,N,CP_Drtn,TT_Task,DT_FixedDUR2,RV_OK,TK_Complete,H-10-170,Slab form works inspection,,,,0,0,0,0,8,0,0,0,,2012-04-29 00:00,2012-04-29 00:00,,,,,,,,2012-05-22 08:00,2012-05-22 16:00,,,,,PT_Normal,,,,,QpfVwDdR9ECuagkOOjsnOQ,LC74pSmZTEOTLSHC/zp9qw,,,N,0,0,,,2012-05-05 12:17,2012-05-16 14:02,admin,admin
812,130262,3769,20028,3746,1,100,N,N,N,CP_Drtn,TT_Task,DT_FixedDUR2,RV_OK,TK_Complete,H-10-200,Slab steel works inspection,,,,0,0,0,0,8,0,0,0,,2012-04-30 00:00,2012-04-30 00:00,,,,,,,,2012-05-27 08:00,2012-05-27 16:00,,,,,PT_Normal,,,,,FHRsg16Gik6DN8XQiXjeZg,4ZmrYMs/xEuywqYkKGx8+A,,,N,0,0,,,2012-05-05 12:17,2012-05-16 14:02,admin,admin
813,130263,3769,20029,3746,1,100,N,N,N,CP_Drtn,TT_Task,DT_FixedDUR2,RV_OK,TK_Complete,H-10-230,Columns form works ISPECTION,,,,0,0,0,0,8,0,0,0,,2012-05-05 00:00,2012-05-05 00:00,,,,,,,,2012-05-13 12:48,2012-05-14 12:48,,,,,PT_Normal,,,,,GnJW9bXRBkaooJj1P+YC8Q,F7b3UvCALEK+ORsAt2L1hA,,,N,0,0,,,2012-05-05 12:17,2012-05-16 14:02,admin,admin
814,130264,3769,20029,3746,1,100,N,N,N,CP_Drtn,TT_Task,DT_FixedDUR2,RV_OK,TK_Complete,H-10-260,Columns steel works ISPECTION,,,,0,0,0,0,8,0,0,0,,2012-05-07 00:00,2012-05-07 00:00,,,,,,,,2012-05-17 12:48,2012-05-18 12:48,,,,,PT_Normal,,,,,kizn43TE5ECzZRkAZDLZLQ,tONdLte7OUOIuYL8hxXGvw,,,N,0,0,,,2012-05-05 12:17,2012-05-16 14:02,admin,admin
815,130265,3769,20029,3746,1,100,N,N,N,CP_Drtn,TT_Task,DT_FixedDUR2,RV_OK,TK_Complete,H-10-270,Engineer Release Pouring,,,,0,0,0,0,8,0,0,0,,2012-05-07 00:00,2012-05-07 00:00,,,,,,,,2012-05-17 12:48,2012-05-18 12:48,,,,,PT_Normal,,,,,+AHmFPHIj0CjWEE1hamYCw,Yuazn5wrAUKGktlT1qYy9g,,,N,0,0,,,2012-05-05 12:17,2012-05-16 14:02,admin,admin
816,130266,3769,20029,3746,1,100,N,N,N,CP_Drtn,TT_Task,DT_FixedDUR2,RV_OK,TK_Complete,H-10-360,Engineer Release Pouring,,,,0,0,0,0,8,0,0,0,,2012-05-13 00:00,2012-05-13 00:00,,,,,,,,2012-06-08 12:48,2012-06-09 12:48,,,,,PT_Normal,,,,,IsqzW6cFsUeEariUwPG+6w,cIfvWtfscku+OqVgVtBkyQ,,,N,0,0,,,2012-05-05 12:17,2012-05-16 14:02,admin,admin
817,130267,3769,20029,3746,1,100,N,N,N,CP_Drtn,TT_Task,DT_FixedDUR2,RV_OK,TK_Complete,H-10-340,Slab form works inspection,,,,0,0,0,0,8,0,0,0,,2012-05-11 00:00,2012-05-11 00:00,,,,,,,,2012-06-03 12:48,2012-06-04 12:48,,,,,PT_Normal,,,,,MW8dP/JPkUKv2cCSL7II1g,LC74pSmZTEOTLSHC/zp9qw,,,N,0,0,,,2012-05-05 12:17,2012-05-16 14:02,admin,admin
818,130268,3769,20029,3746,1,100,N,N,N,CP_Drtn,TT_Task,DT_FixedDUR2,RV_OK,TK_Complete,H-10-370,Slab steel works inspection,,,,0,0,0,0,8,0,0,0,,2012-05-13 00:00,2012-05-13 00:00,,,,,,,,2012-06-08 12:48,2012-06-09 12:48,,,,,PT_Normal,,,,,Ua22PcLWQECONuD6aBQTQQ,4ZmrYMs/xEuywqYkKGx8+A,,,N,0,0,,,2012-05-05 12:17,2012-05-16 14:02,admin,admin
819,130269,3769,20030,3746,1,0,N,N,N,CP_Drtn,TT_Task,DT_FixedDUR2,RV_OK,TK_NotStart,H-10-400,Columns form works ISPECTION,,736,0,8,0,0,0,8,0,0,0,,,,2012-09-01 08:00,2012-09-01 16:00,,2012-06-01 08:00,2012-06-01 16:00,2012-06-01 08:00,2012-06-01 16:00,2012-06-01 08:00,2012-06-01 16:00,,2012-09-01 08:00,2012-09-01 16:00,,PT_Normal,,,,,pEEEqmCJ/k+ys0yd1QnuaA,F7b3UvCALEK+ORsAt2L1hA,,,N,0,0,,,2012-05-05 12:17,2012-05-16 14:02,admin,admin
820,130270,3769,20030,3746,1,0,N,N,N,CP_Drtn,TT_Task,DT_FixedDUR2,RV_OK,TK_NotStart,H-10-420,Columns steel works ISPECTION,,736,0,8,0,0,0,8,0,0,0,,,,2012-09-05 08:00,2012-09-05 16:00,,2012-06-05 08:00,2012-06-05 16:00,2012-06-05 08:00,2012-06-05 16:00,2012-06-05 08:00,2012-06-05 16:00,,2012-09-05 08:00,2012-09-05 16:00,,PT_Normal,,,,,kOkeoT1dz0yDg1PaOzu+zw,tONdLte7OUOIuYL8hxXGvw,,,N,0,0,,,2012-05-05 12:17,2012-05-16 14:02,admin,admin
821,130271,3769,20030,3746,1,0,N,N,N,CP_Drtn,TT_Task,DT_FixedDUR2,RV_OK,TK_NotStart,H-10-430,Engineer Release Pouring,,1056,1056,8,0,0,0,8,0,0,0,,,,2012-10-15 08:00,2012-10-15 16:00,,2012-06-05 08:00,2012-06-05 16:00,2012-06-05 08:00,2012-06-05 16:00,2012-06-05 08:00,2012-06-05 16:00,,2012-10-15 08:00,2012-10-15 16:00,,PT_Normal,,,,,9Vk61hBD1UaXSwQnxbRyxw,Yuazn5wrAUKGktlT1qYy9g,,,N,0,0,,,2012-05-05 12:17,2012-05-16 14:02,admin,admin
822,130272,3769,20030,3746,1,0,N,N,N,CP_Drtn,TT_Task,DT_FixedDUR2,RV_OK,TK_NotStart,H-10-480,Engineer Release Pouring,,880,880,8,0,0,0,8,0,0,0,,,,2012-10-15 08:00,2012-10-15 16:00,,2012-06-27 08:00,2012-06-27 16:00,2012-06-27 08:00,2012-06-27 16:00,2012-06-27 08:00,2012-06-27 16:00,,2012-10-15 08:00,2012-10-15 16:00,,PT_Normal,,,,,qBZVECSrW0emi3K2Q4EHwQ,cIfvWtfscku+OqVgVtBkyQ,,,N,0,0,,,2012-05-05 12:17,2012-05-16 14:02,admin,admin
823,130273,3769,20030,3746,1,0,N,N,N,CP_Drtn,TT_Task,DT_FixedDUR2,RV_OK,TK_NotStart,H-10-460,Slab form works inspection,,736,0,8,0,0,0,8,0,0,0,,,,2012-09-22 08:00,2012-09-22 16:00,,2012-06-22 08:00,2012-06-22 16:00,2012-06-22 08:00,2012-06-22 16:00,2012-06-22 08:00,2012-06-22 16:00,,2012-09-22 08:00,2012-09-22 16:00,,PT_Normal,,,,,GxNgZoejZEe4s25a32PbyQ,LC74pSmZTEOTLSHC/zp9qw,,,N,0,0,,,2012-05-05 12:17,2012-05-16 14:02,admin,admin
824,130274,3769,20030,3746,1,0,N,N,N,CP_Drtn,TT_Task,DT_FixedDUR2,RV_OK,TK_NotStart,H-10-490,Slab steel works inspection,,736,0,8,0,0,0,8,0,0,0,,,,2012-09-27 08:00,2012-09-27 16:00,,2012-06-27 08:00,2012-06-27 16:00,2012-06-27 08:00,2012-06-27 16:00,2012-06-27 08:00,2012-06-27 16:00,,2012-09-27 08:00,2012-09-27 16:00,,PT_Normal,,,,,eAZfYk8iZ0Cwfg/lsSlQXg,4ZmrYMs/xEuywqYkKGx8+A,,,N,0,0,,,2012-05-05 12:17,2012-05-16 14:02,admin,admin
825,130275,3769,20032,3746,1,0,N,N,N,CP_Drtn,TT_Task,DT_FixedDUR2,RV_OK,TK_Active,H-11-110,Columns form works ISPECTION,,1216,1216,8,0,0,0,8,0,0,0,,2012-05-03 00:00,,2012-10-15 08:00,2012-10-15 16:00,,2012-05-16 08:00,2012-05-16 16:00,2012-05-16 08:00,2012-05-16 16:00,2012-06-28 09:12,2012-06-29 09:12,,2012-10-15 08:00,2012-10-15 16:00,,PT_Normal,,,,,TIDi4nSsv0SwyRiTvncTEA,F7b3UvCALEK+ORsAt2L1hA,,,N,0,0,,,2012-05-05 12:17,2012-05-16 14:02,admin,admin
826,130276,3769,20032,3746,1,0,N,N,N,CP_Drtn,TT_Task,DT_FixedDUR2,RV_OK,TK_Active,H-11-130,Columns steel works ISPECTION,,1216,1222.8,1.2,0,0,0,8,0,0,0,,2012-05-09 00:00,,2012-10-15 08:00,2012-10-15 09:12,,2012-05-16 08:00,2012-05-16 09:12,2012-05-16 08:00,2012-05-16 09:12,2012-07-01 09:12,2012-07-02 09:12,,2012-10-15 08:00,2012-10-15 09:12,,PT_Normal,,,,,5dwIwIRH5Uar/PdN2UcTLA,tONdLte7OUOIuYL8hxXGvw,,,N,0,0,,,2012-05-05 12:17,2012-05-16 14:02,admin,admin
827,130277,3769,20032,3746,1,0,N,N,N,CP_Drtn,TT_Task,DT_FixedDUR2,RV_OK,TK_NotStart,H-11-140,Engineer Release Pouring,,1216,1216,8,0,0,0,8,0,0,0,,,,2012-10-15 08:00,2012-10-15 16:00,,2012-05-16 08:00,2012-05-16 16:00,2012-05-16 08:00,2012-05-16 16:00,2012-05-16 08:00,2012-05-16 16:00,,2012-10-15 08:00,2012-10-15 16:00,,PT_Normal,,,,,U/Tub5y33EGAhBcgbFcn+w,Yuazn5wrAUKGktlT1qYy9g,,,N,0,0,,,2012-05-05 12:17,2012-05-16 14:02,admin,admin
828,130278,3769,20032,3746,1,0,N,N,N,CP_Drtn,TT_Task,DT_FixedDUR2,RV_OK,TK_NotStart,H-11-190,Engineer Release Pouring,,1200,1200,8,0,0,0,8,0,0,0,,,,2012-10-15 08:00,2012-10-15 16:00,,2012-05-18 08:00,2012-05-18 16:00,2012-05-18 08:00,2012-05-18 16:00,2012-05-18 08:00,2012-05-18 16:00,,2012-10-15 08:00,2012-10-15 16:00,,PT_Normal,,,,,YHuH+E4y3kiOF5VE3g/33g,cIfvWtfscku+OqVgVtBkyQ,,,N,0,0,,,2012-05-05 12:17,2012-05-16 14:02,admin,admin
829,130279,3769,20032,3746,1,0,N,N,N,CP_Drtn,TT_Task,DT_FixedDUR2,RV_OK,TK_NotStart,H-11-170,Slab form works inspection,,1192,1192,8,0,0,0,8,0,0,0,,,,2012-10-15 08:00,2012-10-15 16:00,,2012-05-19 08:00,2012-05-19 16:00,2012-05-19 08:00,2012-05-19 16:00,2012-05-19 08:00,2012-05-19 16:00,,2012-10-15 08:00,2012-10-15 16:00,,PT_Normal,,,,,zOYRakO7pUqOFrSZtr0tQg,LC74pSmZTEOTLSHC/zp9qw,,,N,0,0,,,2012-05-05 12:17,2012-05-16 14:02,admin,admin
830,130280,3769,20032,3746,1,0,N,N,N,CP_Drtn,TT_Task,DT_FixedDUR2,RV_OK,TK_NotStart,H-11-200,Slab steel works inspection,,704,0,8,0,0,0,8,0,0,0,,,,2012-08-14 08:00,2012-08-14 16:00,,2012-05-18 08:00,2012-05-18 16:00,2012-05-18 08:00,2012-05-18 16:00,2012-05-18 08:00,2012-05-18 16:00,,2012-08-14 08:00,2012-08-14 16:00,,PT_Normal,,,,,RKz+wfGrdE+AW4B4Oe7paQ,4ZmrYMs/xEuywqYkKGx8+A,,,N,0,0,,,2012-05-05 12:17,2012-05-16 14:02,admin,admin
831,130281,3769,20037,3746,1,0,N,N,N,CP_Drtn,TT_Task,DT_FixedDUR2,RV_OK,TK_NotStart,H-11-230,Columns form works ISPECTION,,672,0,8,0,0,0,8,0,0,0,,,,2012-08-20 08:00,2012-08-20 16:00,,2012-05-28 08:00,2012-05-28 16:00,2012-05-28 08:00,2012-05-28 16:00,2012-05-28 08:00,2012-05-28 16:00,,2012-08-20 08:00,2012-08-20 16:00,,PT_Normal,,,,,DFL0a/MHG0+WoNDK7Nk/iQ,F7b3UvCALEK+ORsAt2L1hA,,,N,0,0,,,2012-05-05 12:17,2012-05-16 14:02,admin,admin
832,130282,3769,20037,3746,1,0,N,N,N,CP_Drtn,TT_Task,DT_FixedDUR2,RV_OK,TK_NotStart,H-11-260,Columns steel works ISPECTION,,672,0,8,0,0,0,8,0,0,0,,,,2012-08-24 08:00,2012-08-24 16:00,,2012-06-01 08:00,2012-06-01 16:00,2012-06-01 08:00,2012-06-01 16:00,2012-06-01 08:00,2012-06-01 16:00,,2012-08-24 08:00,2012-08-24 16:00,,PT_Normal,,,,,hm3HGStxrU2XZ04pd/CLPg,tONdLte7OUOIuYL8hxXGvw,,,N,0,0,,,2012-05-05 12:17,2012-05-16 14:02,admin,admin
833,130283,3769,20037,3746,1,0,N,N,N,CP_Drtn,TT_Task,DT_FixedDUR2,RV_OK,TK_NotStart,H-11-270,Engineer Release Pouring,,1088,1088,8,0,0,0,8,0,0,0,,,,2012-10-15 08:00,2012-10-15 16:00,,2012-06-01 08:00,2012-06-01 16:00,2012-06-01 08:00,2012-06-01 16:00,2012-06-01 08:00,2012-06-01 16:00,,2012-10-15 08:00,2012-10-15 16:00,,PT_Normal,,,,,NRYjN5Ph5kG9lbcqDAhBoA,Yuazn5wrAUKGktlT1qYy9g,,,N,0,0,,,2012-05-05 12:17,2012-05-16 14:02,admin,admin
834,130284,3769,20037,3746,1,0,N,N,N,CP_Drtn,TT_Task,DT_FixedDUR2,RV_OK,TK_NotStart,H-11-340,Engineer Release Pouring,,976,976,8,0,0,0,8,0,0,0,,,,2012-10-15 08:00,2012-10-15 16:00,,2012-06-15 08:00,2012-06-15 16:00,2012-06-15 08:00,2012-06-15 16:00,2012-06-15 08:00,2012-06-15 16:00,,2012-10-15 08:00,2012-10-15 16:00,,PT_Normal,,,,,Czz1KFvrK0OGL44NAScZiA,cIfvWtfscku+OqVgVtBkyQ,,,N,0,0,,,2012-05-05 12:17,2012-05-16 14:02,admin,admin
835,130285,3769,20037,3746,1,0,N,N,N,CP_Drtn,TT_Task,DT_FixedDUR2,RV_OK,TK_NotStart,H-11-310,Slab form works inspection,,672,0,8,0,0,0,8,0,0,0,,,,2012-09-02 08:00,2012-09-02 16:00,,2012-06-10 08:00,2012-06-10 16:00,2012-06-10 08:00,2012-06-10 16:00,2012-06-10 08:00,2012-06-10 16:00,,2012-09-02 08:00,2012-09-02 16:00,,PT_Normal,,,,,SqkyDlTbx0iJvKrUT53lCA,LC74pSmZTEOTLSHC/zp9qw,,,N,0,0,,,2012-05-05 12:17,2012-05-16 14:02,admin,admin
836,130286,3769,20037,3746,1,0,N,N,N,CP_Drtn,TT_Task,DT_FixedDUR2,RV_OK,TK_NotStart,H-11-350,Slab steel works inspection,,672,0,8,0,0,0,8,0,0,0,,,,2012-09-07 08:00,2012-09-07 16:00,,2012-06-15 08:00,2012-06-15 16:00,2012-06-15 08:00,2012-06-15 16:00,2012-06-15 08:00,2012-06-15 16:00,,2012-09-07 08:00,2012-09-07 16:00,,PT_Normal,,,,,ofbuIDn2TUK/zRTcqSk64A,4ZmrYMs/xEuywqYkKGx8+A,,,N,0,0,,,2012-05-05 12:17,2012-05-16 14:02,admin,admin
837,130287,3769,20016,3746,1,0,N,N,N,CP_Drtn,TT_Task,DT_FixedDUR2,RV_OK,TK_NotStart,H-11-400,Columns form works ISPECTION,,672,0,8,0,0,0,8,0,0,0,,,,2012-09-14 08:00,2012-09-14 16:00,,2012-06-22 08:00,2012-06-22 16:00,2012-06-22 08:00,2012-06-22 16:00,2012-06-22 08:00,2012-06-22 16:00,,2012-09-14 08:00,2012-09-14 16:00,,PT_Normal,,,,,N8LQEpy6RE2SGbMJtVZKEA,F7b3UvCALEK+ORsAt2L1hA,,,N,0,0,,,2012-05-05 12:17,2012-05-16 14:02,admin,admin
838,130288,3769,20016,3746,1,0,N,N,N,CP_Drtn,TT_Task,DT_FixedDUR2,RV_OK,TK_NotStart,H-11-420,Columns steel works ISPECTION,,672,0,8,0,0,0,8,0,0,0,,,,2012-09-18 08:00,2012-09-18 16:00,,2012-06-26 08:00,2012-06-26 16:00,2012-06-26 08:00,2012-06-26 16:00,2012-06-26 08:00,2012-06-26 16:00,,2012-09-18 08:00,2012-09-18 16:00,,PT_Normal,,,,,NOEhy0G0REiWG6KXg8YEow,tONdLte7OUOIuYL8hxXGvw,,,N,0,0,,,2012-05-05 12:17,2012-05-16 14:02,admin,admin
839,130289,3769,20016,3746,1,0,N,N,N,CP_Drtn,TT_Task,DT_FixedDUR2,RV_OK,TK_NotStart,H-11-430,Engineer Release Pouring,,888,888,8,0,0,0,8,0,0,0,,,,2012-10-15 08:00,2012-10-15 16:00,,2012-06-26 08:00,2012-06-26 16:00,2012-06-26 08:00,2012-06-26 16:00,2012-06-26 08:00,2012-06-26 16:00,,2012-10-15 08:00,2012-10-15 16:00,,PT_Normal,,,,,cGQHgNrJmUmtFwcKkfHCZg,Yuazn5wrAUKGktlT1qYy9g,,,N,0,0,,,2012-05-05 12:17,2012-05-16 14:02,admin,admin
840,130290,3769,20016,3746,1,0,N,N,N,CP_Drtn,TT_Task,DT_FixedDUR2,RV_OK,TK_NotStart,H-11-480,Engineer Release Pouring,,776,776,8,0,0,0,8,0,0,0,,,,2012-10-15 08:00,2012-10-15 16:00,,2012-07-10 08:00,2012-07-10 16:00,2012-07-10 08:00,2012-07-10 16:00,2012-07-10 08:00,2012-07-10 16:00,,2012-10-15 08:00,2012-10-15 16:00,,PT_Normal,,,,,mdHEgiX1tEKYPTyA3Ps6+w,cIfvWtfscku+OqVgVtBkyQ,,,N,0,0,,,2012-05-05 12:17,2012-05-16 14:02,admin,admin
841,130291,3769,20016,3746,1,0,N,N,N,CP_Drtn,TT_Task,DT_FixedDUR2,RV_OK,TK_NotStart,H-11-460,Slab form works inspection,,672,0,8,0,0,0,8,0,0,0,,,,2012-09-27 08:00,2012-09-27 16:00,,2012-07-05 08:00,2012-07-05 16:00,2012-07-05 08:00,2012-07-05 16:00,2012-07-05 08:00,2012-07-05 16:00,,2012-09-27 08:00,2012-09-27 16:00,,PT_Normal,,,,,8cAKy/cJMkabjuvoCNMgsQ,LC74pSmZTEOTLSHC/zp9qw,,,N,0,0,,,2012-05-05 12:17,2012-05-16 14:02,admin,admin
842,130292,3769,20016,3746,1,0,N,N,N,CP_Drtn,TT_Task,DT_FixedDUR2,RV_OK,TK_NotStart,H-11-490,Slab steel works inspection,,672,0,8,0,0,0,8,0,0,0,,,,2012-10-02 08:00,2012-10-02 16:00,,2012-07-10 08:00,2012-07-10 16:00,2012-07-10 08:00,2012-07-10 16:00,2012-07-10 08:00,2012-07-10 16:00,,2012-10-02 08:00,2012-10-02 16:00,,PT_Normal,,,,,6AiLpEajZ0eYhavmbWI6mw,4ZmrYMs/xEuywqYkKGx8+A,,,N,0,0,,,2012-05-05 12:17,2012-05-16 14:02,admin,admin
843,130293,3769,20025,3746,1,0,N,N,N,CP_Drtn,TT_Task,DT_FixedDUR2,RV_OK,TK_NotStart,H-12-250,Columns form works ISPECTION,,24,0,8,0,0,0,8,0,0,0,,,,2012-07-23 08:00,2012-07-23 16:00,,2012-07-20 08:00,2012-07-20 16:00,2012-07-20 08:00,2012-07-20 16:00,2012-07-20 08:00,2012-07-20 16:00,,2012-07-23 08:00,2012-07-23 16:00,,PT_Normal,,,,,7aP3FXb6UUqPwU3mKYQbcg,F7b3UvCALEK+ORsAt2L1hA,,,N,0,0,,,2012-05-05 12:17,2012-05-16 14:02,admin,admin
844,130294,3769,20025,3746,1,0,N,N,N,CP_Drtn,TT_Task,DT_FixedDUR2,RV_OK,TK_NotStart,H-12-270,Columns steel works ISPECTION,,24,0,8,0,0,0,8,0,0,0,,,,2012-07-27 08:00,2012-07-27 16:00,,2012-07-24 08:00,2012-07-24 16:00,2012-07-24 08:00,2012-07-24 16:00,2012-07-24 08:00,2012-07-24 16:00,,2012-07-27 08:00,2012-07-27 16:00,,PT_Normal,,,,,FZ6jjA0OJEK0WW1OqEMijQ,tONdLte7OUOIuYL8hxXGvw,,,N,0,0,,,2012-05-05 12:17,2012-05-16 14:02,admin,admin
845,130295,3769,20025,3746,1,0,N,N,N,CP_Drtn,TT_Task,DT_FixedDUR2,RV_OK,TK_NotStart,H-12-280,Engineer Release Pouring,,664,664,8,0,0,0,8,0,0,0,,,,2012-10-15 08:00,2012-10-15 16:00,,2012-07-24 08:00,2012-07-24 16:00,2012-07-24 08:00,2012-07-24 16:00,2012-07-24 08:00,2012-07-24 16:00,,2012-10-15 08:00,2012-10-15 16:00,,PT_Normal,,,,,xwwSfwY0d0OOPS3eGpLbiA,Yuazn5wrAUKGktlT1qYy9g,,,N,0,0,,,2012-05-05 12:17,2012-05-16 14:02,admin,admin
846,130296,3769,20025,3746,1,0,N,N,N,CP_Drtn,TT_Task,DT_FixedDUR2,RV_OK,TK_NotStart,H-12-330,Engineer Release Pouring,,528,528,8,0,0,0,8,0,0,0,,,,2012-10-15 08:00,2012-10-15 16:00,,2012-08-10 08:00,2012-08-10 16:00,2012-08-10 08:00,2012-08-10 16:00,2012-08-10 08:00,2012-08-10 16:00,,2012-10-15 08:00,2012-10-15 16:00,,PT_Normal,,,,,pV65bSyJOUy5syjccEMiJg,cIfvWtfscku+OqVgVtBkyQ,,,N,0,0,,,2012-05-05 12:17,2012-05-16 14:02,admin,admin
847,130297,3769,20025,3746,1,0,N,N,N,CP_Drtn,TT_Task,DT_FixedDUR2,RV_OK,TK_NotStart,H-12-310,Slab form works inspection,,24,0,8,0,0,0,8,0,0,0,,,,2012-08-08 08:00,2012-08-08 16:00,,2012-08-05 08:00,2012-08-05 16:00,2012-08-05 08:00,2012-08-05 16:00,2012-08-05 08:00,2012-08-05 16:00,,2012-08-08 08:00,2012-08-08 16:00,,PT_Normal,,,,,gcYKZoeeskWJ15dcCh/AhQ,LC74pSmZTEOTLSHC/zp9qw,,,N,0,0,,,2012-05-05 12:17,2012-05-16 14:02,admin,admin
848,130298,3769,20025,3746,1,0,N,N,N,CP_Drtn,TT_Task,DT_FixedDUR2,RV_OK,TK_NotStart,H-12-340,Slab steel works inspection,,24,0,8,0,0,0,8,0,0,0,,,,2012-08-13 08:00,2012-08-13 16:00,,2012-08-10 08:00,2012-08-10 16:00,2012-08-10 08:00,2012-08-10 16:00,2012-08-10 08:00,2012-08-10 16:00,,2012-08-13 08:00,2012-08-13 16:00,,PT_Normal,,,,,BdjpVKGYhEOTzeD9KAe5Xg,4ZmrYMs/xEuywqYkKGx8+A,,,N,0,0,,,2012-05-05 12:17,2012-05-16 14:02,admin,admin
849,130299,3769,20026,3746,1,0,N,N,N,CP_Drtn,TT_Task,DT_FixedDUR2,RV_OK,TK_NotStart,H-12-370,Columns form works ISPECTION,,24,0,8,0,0,0,8,0,0,0,,,,2012-08-19 08:00,2012-08-19 16:00,,2012-08-16 08:00,2012-08-16 16:00,2012-08-16 08:00,2012-08-16 16:00,2012-08-16 08:00,2012-08-16 16:00,,2012-08-19 08:00,2012-08-19 16:00,,PT_Normal,,,,,iiwYky3ETEKawVH6u2A57g,F7b3UvCALEK+ORsAt2L1hA,,,N,0,0,,,2012-05-05 12:17,2012-05-16 14:02,admin,admin
850,130300,3769,20026,3746,1,0,N,N,N,CP_Drtn,TT_Task,DT_FixedDUR2,RV_OK,TK_NotStart,H-12-400,Columns steel works ISPECTION,,24,0,8,0,0,0,8,0,0,0,,,,2012-08-23 08:00,2012-08-23 16:00,,2012-08-20 08:00,2012-08-20 16:00,2012-08-20 08:00,2012-08-20 16:00,2012-08-20 08:00,2012-08-20 16:00,,2012-08-23 08:00,2012-08-23 16:00,,PT_Normal,,,,,C7c0juuEQESp/GiNxAt+CA,tONdLte7OUOIuYL8hxXGvw,,,N,0,0,,,2012-05-05 12:17,2012-05-16 14:02,admin,admin
851,130301,3769,20026,3746,1,0,N,N,N,CP_Drtn,TT_Task,DT_FixedDUR2,RV_OK,TK_NotStart,H-12-410,Engineer Release Pouring,,448,448,8,0,0,0,8,0,0,0,,,,2012-10-15 08:00,2012-10-15 16:00,,2012-08-20 08:00,2012-08-20 16:00,2012-08-20 08:00,2012-08-20 16:00,2012-08-20 08:00,2012-08-20 16:00,,2012-10-15 08:00,2012-10-15 16:00,,PT_Normal,,,,,endjxEL1rUG/tdADqEUMaw,Yuazn5wrAUKGktlT1qYy9g,,,N,0,0,,,2012-05-05 12:17,2012-05-16 14:02,admin,admin
852,130302,3769,20026,3746,1,0,N,N,N,CP_Drtn,TT_Task,DT_FixedDUR2,RV_OK,TK_NotStart,H-12-480,Engineer Release Pouring,,336,336,8,0,0,0,8,0,0,0,,,,2012-10-15 08:00,2012-10-15 16:00,,2012-09-03 08:00,2012-09-03 16:00,2012-09-03 08:00,2012-09-03 16:00,2012-09-03 08:00,2012-09-03 16:00,,2012-10-15 08:00,2012-10-15 16:00,,PT_Normal,,,,,ktQ5nImDAE6xg9lsApPXGw,cIfvWtfscku+OqVgVtBkyQ,,,N,0,0,,,2012-05-05 12:17,2012-05-16 14:02,admin,admin
853,130303,3769,20026,3746,1,0,N,N,N,CP_Drtn,TT_Task,DT_FixedDUR2,RV_OK,TK_NotStart,H-12-450,Slab form works inspection,,24,0,8,0,0,0,8,0,0,0,,,,2012-09-01 08:00,2012-09-01 16:00,,2012-08-29 08:00,2012-08-29 16:00,2012-08-29 08:00,2012-08-29 16:00,2012-08-29 08:00,2012-08-29 16:00,,2012-09-01 08:00,2012-09-01 16:00,,PT_Normal,,,,,gX4OgE2vPk+vykG+Qz3/Hg,LC74pSmZTEOTLSHC/zp9qw,,,N,0,0,,,2012-05-05 12:17,2012-05-16 14:02,admin,admin
854,130304,3769,20026,3746,1,0,N,N,N,CP_Drtn,TT_Task,DT_FixedDUR2,RV_OK,TK_NotStart,H-12-490,Slab steel works inspection,,24,0,8,0,0,0,8,0,0,0,,,,2012-09-06 08:00,2012-09-06 16:00,,2012-09-03 08:00,2012-09-03 16:00,2012-09-03 08:00,2012-09-03 16:00,2012-09-03 08:00,2012-09-03 16:00,,2012-09-06 08:00,2012-09-06 16:00,,PT_Normal,,,,,LCqmWbptW0G3Jo2jN0Yq6w,4ZmrYMs/xEuywqYkKGx8+A,,,N,0,0,,,2012-05-05 12:17,2012-05-16 14:02,admin,admin
855,130305,3769,20027,3746,1,0,N,N,N,CP_Drtn,TT_Task,DT_FixedDUR2,RV_OK,TK_NotStart,H-12-540,Columns form works ISPECTION,,24,0,8,0,0,0,8,0,0,0,,,,2012-09-13 08:00,2012-09-13 16:00,,2012-09-10 08:00,2012-09-10 16:00,2012-09-10 08:00,2012-09-10 16:00,2012-09-10 08:00,2012-09-10 16:00,,2012-09-13 08:00,2012-09-13 16:00,,PT_Normal,,,,,zgl5Moi4wUSEakMOtmH1Tg,F7b3UvCALEK+ORsAt2L1hA,,,N,0,0,,,2012-05-05 12:17,2012-05-16 14:02,admin,admin
856,130306,3769,20027,3746,1,0,N,N,N,CP_Drtn,TT_Task,DT_FixedDUR2,RV_OK,TK_NotStart,H-12-560,Columns steel works ISPECTION,,24,0,8,0,0,0,8,0,0,0,,,,2012-09-17 08:00,2012-09-17 16:00,,2012-09-14 08:00,2012-09-14 16:00,2012-09-14 08:00,2012-09-14 16:00,2012-09-14 08:00,2012-09-14 16:00,,2012-09-17 08:00,2012-09-17 16:00,,PT_Normal,,,,,9YIrfkNR4k2PkDn20/K9cQ,tONdLte7OUOIuYL8hxXGvw,,,N,0,0,,,2012-05-05 12:17,2012-05-16 14:02,admin,admin
857,130307,3769,20027,3746,1,0,N,N,N,CP_Drtn,TT_Task,DT_FixedDUR2,RV_OK,TK_NotStart,H-12-570,Engineer Release Pouring,,248,248,8,0,0,0,8,0,0,0,,,,2012-10-15 08:00,2012-10-15 16:00,,2012-09-14 08:00,2012-09-14 16:00,2012-09-14 08:00,2012-09-14 16:00,2012-09-14 08:00,2012-09-14 16:00,,2012-10-15 08:00,2012-10-15 16:00,,PT_Normal,,,,,jbM81HHSakKTDNNMZB2kTg,Yuazn5wrAUKGktlT1qYy9g,,,N,0,0,,,2012-05-05 12:17,2012-05-16 14:02,admin,admin
858,130308,3769,20027,3746,1,0,N,N,N,CP_Drtn,TT_Task,DT_FixedDUR2,RV_OK,TK_NotStart,H-12-620,Engineer Release Pouring,,136,136,8,0,0,0,8,0,0,0,,,,2012-10-15 08:00,2012-10-15 16:00,,2012-09-28 08:00,2012-09-28 16:00,2012-09-28 08:00,2012-09-28 16:00,2012-09-28 08:00,2012-09-28 16:00,,2012-10-15 08:00,2012-10-15 16:00,,PT_Normal,,,,,2OA+obpL/0aN4JaSnHebsw,cIfvWtfscku+OqVgVtBkyQ,,,N,0,0,,,2012-05-05 12:17,2012-05-16 14:02,admin,admin
859,130309,3769,20027,3746,1,0,N,N,N,CP_Drtn,TT_Task,DT_FixedDUR2,RV_OK,TK_NotStart,H-12-600,Slab form works inspection,,24,0,8,0,0,0,8,0,0,0,,,,2012-09-26 08:00,2012-09-26 16:00,,2012-09-23 08:00,2012-09-23 16:00,2012-09-23 08:00,2012-09-23 16:00,2012-09-23 08:00,2012-09-23 16:00,,2012-09-26 08:00,2012-09-26 16:00,,PT_Normal,,,,,gWWqXVlTyEiWOtoESykdRA,LC74pSmZTEOTLSHC/zp9qw,,,N,0,0,,,2012-05-05 12:17,2012-05-16 14:02,admin,admin
860,130310,3769,20027,3746,1,0,N,N,N,CP_Drtn,TT_Task,DT_FixedDUR2,RV_OK,TK_NotStart,H-12-630,Slab steel works inspection,,24,0,8,0,0,0,8,0,0,0,,,,2012-10-01 08:00,2012-10-01 16:00,,2012-09-28 08:00,2012-09-28 16:00,2012-09-28 08:00,2012-09-28 16:00,2012-09-28 08:00,2012-09-28 16:00,,2012-10-01 08:00,2012-10-01 16:00,,PT_Normal,,,,,6SgYA2Zcu0qwGsZwe3KQDg,4ZmrYMs/xEuywqYkKGx8+A,,,N,0,0,,,2012-05-05 12:17,2012-05-16 14:02,admin,admin
861,130311,3769,19962,1191,1,100,N,N,N,CP_Drtn,TT_Task,DT_FixedDUR2,RV_OK,TK_Complete,C-1-110,ColColumns&walls form works inspection,,,,0,0,0,0,8,0,0,0,,2012-04-06 00:00,2012-04-06 00:00,,,,,,,,2012-06-02 08:00,2012-06-02 16:00,,,,,PT_Normal,,,,,xf9HXAWNvkGruatSaYnSpQ,F7b3UvCALEK+ORsAt2L1hA,,,N,0,0,,,2012-05-05 12:17,2012-05-16 14:02,admin,admin
862,130312,3769,19962,1191,1,100,N,N,N,CP_Drtn,TT_Task,DT_FixedDUR2,RV_OK,TK_Complete,C-1-130,Columns&walls steel works inspection,,,,0,0,0,0,8,0,0,0,,2012-04-09 00:00,2012-04-09 00:00,,,,,,,,2012-06-09 08:00,2012-06-09 16:00,,,,,PT_Normal,,,,,TMr6K1uet0e5VecsfwtEWg,tONdLte7OUOIuYL8hxXGvw,,,N,0,0,,,2012-05-05 12:17,2012-05-16 14:02,admin,admin
863,130313,3769,19962,1191,1,100,N,N,N,CP_Drtn,TT_Task,DT_FixedDUR2,RV_OK,TK_Complete,C-1-140,Engineer Release Pouring,,,,0,0,0,0,8,0,0,0,,2012-04-04 00:00,2012-04-04 00:00,,,,,,,,2012-05-23 08:00,2012-05-23 16:00,,,,,PT_Normal,,,,,7UqsUqXpCUeyjxIZLIpCeQ,Yuazn5wrAUKGktlT1qYy9g,,,N,0,0,,,2012-05-05 12:17,2012-05-16 14:02,admin,admin
864,130314,3769,19962,1191,1,100,N,N,N,CP_Drtn,TT_Task,DT_FixedDUR2,RV_OK,TK_Complete,C-1-190,Engineer Release Pouring,,,,0,0,0,0,8,0,0,0,,2012-04-25 00:00,2012-04-25 00:00,,,,,,,,2012-05-14 08:00,2012-05-14 16:00,,,,,PT_Normal,,,,,RmeRl43zwEuxr0f/dXGVEQ,cIfvWtfscku+OqVgVtBkyQ,,,N,0,0,,,2012-05-05 12:17,2012-05-16 14:02,admin,admin
865,130315,3769,19962,1191,1,100,N,N,N,CP_Drtn,TT_Task,DT_FixedDUR2,RV_OK,TK_Complete,C-1-170,Slab form works inspection,,,,0,0,0,0,8,0,0,0,,2012-04-23 00:00,2012-04-23 00:00,,,,,,,,2012-05-08 08:00,2012-05-08 16:00,,,,,PT_Normal,,,,,TaUBo/L3l0CB7zntss34xg,LC74pSmZTEOTLSHC/zp9qw,,,N,0,0,,,2012-05-05 12:17,2012-05-16 14:02,admin,admin
866,130316,3769,19962,1191,1,100,N,N,N,CP_Drtn,TT_Task,DT_FixedDUR2,RV_OK,TK_Complete,C-1-200,Slab steel works inspection,,,,0,0,0,0,8,0,0,0,,2012-04-24 00:00,2012-04-24 00:00,,,,,,,,2012-05-14 08:00,2012-05-14 16:00,,,,,PT_Normal,,,,,PaJHTd/xtEuVE3NAjhvozA,4ZmrYMs/xEuywqYkKGx8+A,,,N,0,0,,,2012-05-05 12:17,2012-05-16 14:02,admin,admin
867,130317,3769,19966,1191,1,100,N,N,N,CP_Drtn,TT_Task,DT_FixedDUR2,RV_OK,TK_Complete,C-2-110,ColColumns&walls form works inspection,,,,0,0,0,0,8,0,0,0,,2012-04-05 00:00,2012-04-05 00:00,,,,,,,,2012-05-09 08:00,2012-05-09 16:00,,,,,PT_Normal,,,,,ng3B3FmCvkG2sd1f061hxA,F7b3UvCALEK+ORsAt2L1hA,,,N,0,0,,,2012-05-05 12:17,2012-05-16 14:02,admin,admin
868,130318,3769,19966,1191,1,100,N,N,N,CP_Drtn,TT_Task,DT_FixedDUR2,RV_OK,TK_Complete,C-2-130,Columns&walls steel works inspection,,,,0,0,0,0,8,0,0,0,,2012-04-09 00:00,2012-04-09 00:00,,,,,,,,2012-05-17 08:00,2012-05-17 16:00,,,,,PT_Normal,,,,,FA0JHYxKiEKg2wqlM0Eyvg,tONdLte7OUOIuYL8hxXGvw,,,N,0,0,,,2012-05-05 12:17,2012-05-16 14:02,admin,admin
869,130319,3769,19966,1191,1,100,N,N,N,CP_Drtn,TT_Task,DT_FixedDUR2,RV_OK,TK_Complete,C-2-140,Engineer Release Pouring,,,,0,0,0,0,8,0,0,0,,2012-04-10 00:00,2012-04-10 00:00,,,,,,,,2012-05-21 08:00,2012-05-21 16:00,,,,,PT_Normal,,,,,dHnU64ToSUS/Xl2s1LCZrA,Yuazn5wrAUKGktlT1qYy9g,,,N,0,0,,,2012-05-05 12:17,2012-05-16 14:02,admin,admin
870,130320,3769,19966,1191,1,100,N,N,N,CP_Drtn,TT_Task,DT_FixedDUR2,RV_OK,TK_Complete,C-2-190,Engineer Release Pouring,,,,0,0,0,0,8,0,0,0,,2012-04-22 00:00,2012-04-22 00:00,,,,,,,,2012-06-09 08:00,2012-06-09 16:00,,,,,PT_Normal,,,,,IMVVHz6EIEmUPKKbt1aLbg,cIfvWtfscku+OqVgVtBkyQ,,,N,0,0,,,2012-05-05 12:17,2012-05-16 14:02,admin,admin
871,130321,3769,19966,1191,1,100,N,N,N,CP_Drtn,TT_Task,DT_FixedDUR2,RV_OK,TK_Complete,C-2-170,Slab form works inspection,,,,0,0,0,0,8,0,0,0,,2012-04-17 00:00,2012-04-17 00:00,,,,,,,,2012-06-02 08:00,2012-06-02 16:00,,,,,PT_Normal,,,,,0Zg7cIfUD0GUbH7ArDWiUg,LC74pSmZTEOTLSHC/zp9qw,,,N,0,0,,,2012-05-05 12:17,2012-05-16 14:02,admin,admin
872,130322,3769,19966,1191,1,100,N,N,N,CP_Drtn,TT_Task,DT_FixedDUR2,RV_OK,TK_Complete,C-2-200,Slab steel works inspection,,,,0,0,0,0,8,0,0,0,,2012-04-21 00:00,2012-04-21 00:00,,,,,,,,2012-06-09 08:00,2012-06-09 16:00,,,,,PT_Normal,,,,,DhjAYUF8T0GQKTe9zM6uAg,4ZmrYMs/xEuywqYkKGx8+A,,,N,0,0,,,2012-05-05 12:17,2012-05-16 14:02,admin,admin
873,130323,3769,19970,1191,1,100,N,N,N,CP_Drtn,TT_Task,DT_FixedDUR2,RV_OK,TK_Complete,C-3-110,ColColumns&walls form works inspection,,,,0,0,0,0,8,0,0,0,,2012-04-13 00:00,2012-04-13 00:00,,,,,,,,2012-05-12 08:00,2012-05-12 16:00,,,,,PT_Normal,,,,,Y9tpoUSKc0y3m4cbD9ypKA,F7b3UvCALEK+ORsAt2L1hA,,,N,0,0,,,2012-05-05 12:17,2012-05-16 14:02,admin,admin
874,130324,3769,19970,1191,1,100,N,N,N,CP_Drtn,TT_Task,DT_FixedDUR2,RV_OK,TK_Complete,C-3-130,Columns &walls steel works ISPECTION,,,,0,0,0,0,8,0,0,0,,2012-04-17 00:00,2012-04-17 00:00,,,,,,,,2012-05-19 08:00,2012-05-19 16:00,,,,,PT_Normal,,,,,ZrWptpbPlUuNxQOTy4SpcQ,tONdLte7OUOIuYL8hxXGvw,,,N,0,0,,,2012-05-05 12:17,2012-05-16 14:02,admin,admin
875,130325,3769,19970,1191,1,100,N,N,N,CP_Drtn,TT_Task,DT_FixedDUR2,RV_OK,TK_Complete,C-3-140,Engineer Release Pouring,,,,0,0,0,0,8,0,0,0,,2012-04-17 00:00,2012-04-17 00:00,,,,,,,,2012-05-19 08:00,2012-05-19 16:00,,,,,PT_Normal,,,,,DPRc3aWhJk6Nfwn0HSVJVA,Yuazn5wrAUKGktlT1qYy9g,,,N,0,0,,,2012-05-05 12:17,2012-05-16 14:02,admin,admin
876,130326,3769,19970,1191,1,100,N,N,N,CP_Drtn,TT_Task,DT_FixedDUR2,RV_OK,TK_Complete,C-3-190,Engineer Release Pouring,,,,0,0,0,0,8,0,0,0,,2012-05-01 00:00,2012-05-01 00:00,,,,,,,,2012-04-30 08:00,2012-04-30 16:00,,,,,PT_Normal,,,,,HdDjcW3LPEueTrcj6nRaUw,cIfvWtfscku+OqVgVtBkyQ,,,N,0,0,,,2012-05-05 12:17,2012-05-16 14:02,admin,admin
877,130327,3769,19970,1191,1,100,N,N,N,CP_Drtn,TT_Task,DT_FixedDUR2,RV_OK,TK_Complete,C-3-170,Slab form works inspection,,,,0,0,0,0,8,0,0,0,,2012-04-22 00:00,2012-04-22 00:00,,,,,,,,2012-05-30 08:00,2012-05-30 16:00,,,,,PT_Normal,,,,,g1QedQLAM0a6U3KIS5fiVg,LC74pSmZTEOTLSHC/zp9qw,,,N,0,0,,,2012-05-05 12:17,2012-05-16 14:02,admin,admin
878,130328,3769,19970,1191,1,100,N,N,N,CP_Drtn,TT_Task,DT_FixedDUR2,RV_OK,TK_Complete,C-3-200,Slab steel works inspection,,,,0,0,0,0,8,0,0,0,,2012-04-29 00:00,2012-04-29 00:00,,,,,,,,2012-06-05 08:00,2012-06-05 16:00,,,,,PT_Normal,,,,,0j2KNUb8R0q2mhg7aF08Iw,4ZmrYMs/xEuywqYkKGx8+A,,,N,0,0,,,2012-05-05 12:17,2012-05-16 14:02,admin,admin
879,130329,3769,19986,1191,1,100,N,N,N,CP_Drtn,TT_Task,DT_FixedDUR2,RV_OK,TK_Complete,C-4-110,ColColumns&walls form works inspection,,,,0,0,0,0,8,0,0,0,,2012-04-04 00:00,2012-04-04 00:00,,,,,,,,2012-05-12 08:00,2012-05-12 16:00,,,,,PT_Normal,,,,,5k0ooViYa0KRvlexzlZNoQ,F7b3UvCALEK+ORsAt2L1hA,,,N,0,0,,,2012-05-05 12:17,2012-05-16 14:02,admin,admin
880,130330,3769,19986,1191,1,100,N,N,N,CP_Drtn,TT_Task,DT_FixedDUR2,RV_OK,TK_Complete,C-4-130,Columns&walls steel works inspection,,,,0,0,0,0,8,0,0,0,,2012-04-09 00:00,2012-04-09 00:00,,,,,,,,2012-05-19 08:00,2012-05-19 16:00,,,,,PT_Normal,,,,,mpmdYDSw2UCpL28ZWDF93Q,tONdLte7OUOIuYL8hxXGvw,,,N,0,0,,,2012-05-05 12:17,2012-05-16 14:02,admin,admin
881,130331,3769,19986,1191,1,100,N,N,N,CP_Drtn,TT_Task,DT_FixedDUR2,RV_OK,TK_Complete,C-4-140,Engineer Release Pouring,,,,0,0,0,0,8,0,0,0,,2012-04-10 00:00,2012-04-10 00:00,,,,,,,,2012-05-23 08:00,2012-05-23 16:00,,,,,PT_Normal,,,,,HM6wwuRAdE+e4uTtYwLkow,Yuazn5wrAUKGktlT1qYy9g,,,N,0,0,,,2012-05-05 12:17,2012-05-16 14:02,admin,admin
882,130332,3769,19986,1191,1,100,N,N,N,CP_Drtn,TT_Task,DT_FixedDUR2,RV_OK,TK_Complete,C-4-190,Engineer Release Pouring,,,,0,0,0,0,8,0,0,0,,2012-04-20 00:00,2012-04-20 00:00,,,,,,,,2012-06-30 08:00,2012-06-30 16:00,,,,,PT_Normal,,,,,my4wxoOClkSslgpNjMG7eA,cIfvWtfscku+OqVgVtBkyQ,,,N,0,0,,,2012-05-05 12:17,2012-05-16 14:02,admin,admin
883,130333,3769,19986,1191,1,100,N,N,N,CP_Drtn,TT_Task,DT_FixedDUR2,RV_OK,TK_Complete,C-4-170,Slab form works inspection,,,,0,0,0,0,8,0,0,0,,2012-04-16 00:00,2012-04-16 00:00,,,,,,,,2012-06-24 08:00,2012-06-24 16:00,,,,,PT_Normal,,,,,kO/ZZ0qC6k6akxyjZrV72w,LC74pSmZTEOTLSHC/zp9qw,,,N,0,0,,,2012-05-05 12:17,2012-05-16 14:02,admin,admin
884,130334,3769,19986,1191,1,100,N,N,N,CP_Drtn,TT_Task,DT_FixedDUR2,RV_OK,TK_Complete,C-4-200,Slab steel works inspection,,,,0,0,0,0,8,0,0,0,,2012-04-20 00:00,2012-04-20 00:00,,,,,,,,2012-06-30 08:00,2012-06-30 16:00,,,,,PT_Normal,,,,,nZBlDlUCQ0eHgKdXzyGh/Q,4ZmrYMs/xEuywqYkKGx8+A,,,N,0,0,,,2012-05-05 12:17,2012-05-16 14:02,admin,admin
885,130335,3769,19978,1191,1,100,N,N,N,CP_Drtn,TT_Task,DT_FixedDUR2,RV_OK,TK_Complete,C-5-110,ColColumns&walls form works inspection,,,,0,0,0,0,8,0,0,0,,2012-04-15 00:00,2012-04-15 00:00,,,,,,,,2012-05-12 08:00,2012-05-12 16:00,,,,,PT_Normal,,,,,Kb0Q9hGn0EyOvXgFQuLN/w,F7b3UvCALEK+ORsAt2L1hA,,,N,0,0,,,2012-05-05 12:17,2012-05-16 14:02,admin,admin
886,130336,3769,19978,1191,1,100,N,N,N,CP_Drtn,TT_Task,DT_FixedDUR2,RV_OK,TK_Complete,C-5-130,Columns&walls steel works inspection,,,,0,0,0,0,8,0,0,0,,2012-04-21 00:00,2012-04-21 00:00,,,,,,,,2012-05-19 08:00,2012-05-19 16:00,,,,,PT_Normal,,,,,bxpqNM7luUuGS0gpNJUZoQ,tONdLte7OUOIuYL8hxXGvw,,,N,0,0,,,2012-05-05 12:17,2012-05-16 14:02,admin,admin
887,130337,3769,19978,1191,1,100,N,N,N,CP_Drtn,TT_Task,DT_FixedDUR2,RV_OK,TK_Complete,C-5-140,Engineer Release Pouring,,,,0,0,0,0,8,0,0,0,,2012-04-22 00:00,2012-04-22 00:00,,,,,,,,2012-05-19 08:00,2012-05-19 16:00,,,,,PT_Normal,,,,,Xiep2/myHUOao8l0F+pGcg,Yuazn5wrAUKGktlT1qYy9g,,,N,0,0,,,2012-05-05 12:17,2012-05-16 14:02,admin,admin
888,130338,3769,19978,1191,1,100,N,N,N,CP_Drtn,TT_Task,DT_FixedDUR2,RV_OK,TK_Complete,C-5-190,Engineer Release Pouring,,,,0,0,0,0,8,0,0,0,,2012-05-01 00:00,2012-05-01 00:00,,,,,,,,2012-05-25 08:00,2012-05-25 16:00,,,,,PT_Normal,,,,,/QIYwzIIP0CBdWBAnbJU7Q,cIfvWtfscku+OqVgVtBkyQ,,,N,0,0,,,2012-05-05 12:17,2012-05-16 14:02,admin,admin
889,130339,3769,19978,1191,1,100,N,N,N,CP_Drtn,TT_Task,DT_FixedDUR2,RV_OK,TK_Complete,C-5-170,Slab form works inspection,,,,0,0,0,0,8,0,0,0,,2012-04-28 00:00,2012-04-28 00:00,,,,,,,,2012-05-19 08:00,2012-05-19 16:00,,,,,PT_Normal,,,,,7qd/14UZykiWz7kEAH5wcg,LC74pSmZTEOTLSHC/zp9qw,,,N,0,0,,,2012-05-05 12:17,2012-05-16 14:02,admin,admin
890,130340,3769,19978,1191,1,100,N,N,N,CP_Drtn,TT_Task,DT_FixedDUR2,RV_OK,TK_Complete,C-5-200,Slab steel works inspection,,,,0,0,0,0,8,0,0,0,,2012-04-30 00:00,2012-04-30 00:00,,,,,,,,2012-05-25 08:00,2012-05-25 16:00,,,,,PT_Normal,,,,,uzAo9bcDH0Sh8bwKYOS/Hg,4ZmrYMs/xEuywqYkKGx8+A,,,N,0,0,,,2012-05-05 12:17,2012-05-16 14:02,admin,admin
891,130341,3769,19941,1191,1,0,N,N,N,CP_Drtn,TT_Task,DT_FixedDUR2,RV_OK,TK_NotStart,C-5-230,Engineer inspection&approval for water proofing,,860,436,8,0,0,0,8,0,0,0,,,,2012-09-27 08:00,2012-09-27 16:00,,2012-05-24 12:00,2012-05-26 12:00,2012-05-24 12:00,2012-05-26 12:00,2012-05-24 12:00,2012-05-26 12:00,,2012-09-27 08:00,2012-09-27 16:00,,PT_Normal,,,,,h0hDCxx5IUyKDKf92pZbOQ,,,,N,0,0,,,2012-05-05 12:17,2012-05-16 14:02,admin,admin
892,130342,3769,19941,1191,1,0,N,N,N,CP_Drtn,TT_Task,DT_FixedDUR2,RV_OK,TK_NotStart,C-5-250,Engineer inspection&approval for Heat insulation,,424,0,8,0,0,0,8,0,0,0,,,,2012-10-04 08:00,2012-10-04 16:00,,2012-08-04 08:00,2012-08-04 16:00,2012-08-04 08:00,2012-08-04 16:00,2012-08-04 08:00,2012-08-04 16:00,,2012-10-04 08:00,2012-10-04 16:00,,PT_Normal,,,,,ZkHwBJPvtka+GbgQgAJvsg,,,,N,0,0,,,2012-05-05 12:17,2012-05-16 14:02,admin,admin
893,130343,3769,19941,1191,1,0,N,N,N,CP_Drtn,TT_Task,DT_FixedDUR2,RV_OK,TK_NotStart,C-5-320,Engineer inspection&approval for Footing insulation,,812,812,8,0,0,0,8,0,0,0,,,,2012-10-15 08:00,2012-10-15 16:00,,2012-06-18 12:00,2012-06-19 12:00,2012-06-18 12:00,2012-06-19 12:00,2012-06-18 12:00,2012-06-19 12:00,,2012-10-15 08:00,2012-10-15 16:00,,PT_Normal,,,,,bG+yg1RJ0UyPWLoJXFbSTw,,,,N,0,0,,,2012-05-05 12:17,2012-05-16 14:02,admin,admin
894,130344,3769,19941,1191,1,0,N,N,N,CP_Drtn,TT_Task,DT_FixedDUR2,RV_OK,TK_NotStart,C-5-290,Engineer Release Pouring,,432,432,8,0,0,0,8,0,0,0,,,,2012-10-15 08:00,2012-10-15 16:00,,2012-08-13 08:00,2012-08-13 16:00,2012-08-13 08:00,2012-08-13 16:00,2012-08-13 08:00,2012-08-13 16:00,,2012-10-15 08:00,2012-10-15 16:00,,PT_Normal,,,,,rRlbpu6VqU6rB0XiDC8avQ,0dWfLI9ykU2Qg5vQLZ2L1g,,,N,0,0,,,2012-05-05 12:17,2012-05-16 14:02,admin,admin
895,130345,3769,19941,1191,1,0,N,N,N,CP_Drtn,TT_Task,DT_FixedDUR2,RV_OK,TK_NotStart,C-5-300,Engineer inspection&approval for Slopped P.C,,424,0,8,0,0,0,8,0,0,0,,,,2012-10-14 08:00,2012-10-14 16:00,,2012-08-13 08:00,2012-08-13 16:00,2012-08-13 08:00,2012-08-13 16:00,2012-08-13 08:00,2012-08-13 16:00,,2012-10-14 08:00,2012-10-14 16:00,,PT_Normal,,,,,rrvT5Awmu0+LpDxGyn6ghQ,,,,N,0,0,,,2012-05-05 12:17,2012-05-16 14:02,admin,admin
896,130346,3769,19984,1191,1,0,N,N,N,CP_Drtn,TT_Task,DT_FixedDUR2,RV_OK,TK_NotStart,C-4-230,Engineer inspection&approval for water proofing,,920,496,8,0,0,0,8,0,0,0,,,,2012-09-27 08:00,2012-09-27 16:00,,2012-05-16 08:00,2012-05-16 16:00,2012-05-16 08:00,2012-05-16 16:00,2012-05-16 08:00,2012-05-16 16:00,,2012-09-27 08:00,2012-09-27 16:00,,PT_Normal,,,,,+Qb8lhxCaUiIbHN/AA/61A,4lt9Wrz7Ukm+MNVphFzIFA,,,N,0,0,,,2012-05-05 12:17,2012-05-16 14:02,admin,admin
897,130347,3769,19984,1191,1,0,N,N,N,CP_Drtn,TT_Task,DT_FixedDUR2,RV_OK,TK_NotStart,C-4-250,Engineer inspection&approval for Heat insulation,,424,0,8,0,0,0,8,0,0,0,,,,2012-10-04 08:00,2012-10-04 16:00,,2012-08-04 08:00,2012-08-04 16:00,2012-08-04 08:00,2012-08-04 16:00,2012-08-04 08:00,2012-08-04 16:00,,2012-10-04 08:00,2012-10-04 16:00,,PT_Normal,,,,,K4sbLTxrd0ORddIV50pvXA,03wA+LuUhE6n+IsX7CsvRw,,,N,0,0,,,2012-05-05 12:17,2012-05-16 14:02,admin,admin
898,130348,3769,19984,1191,1,0,N,N,N,CP_Drtn,TT_Task,DT_FixedDUR2,RV_OK,TK_NotStart,C-4-320,Engineer inspection&approval for Footing insulation,,1027.2,1027.2,8,0,0,0,8,0,0,0,,,,2012-10-15 08:00,2012-10-15 16:00,,2012-05-17 12:48,2012-05-19 12:48,2012-05-17 12:48,2012-05-19 12:48,2012-05-17 12:48,2012-05-19 12:48,,2012-10-15 08:00,2012-10-15 16:00,,PT_Normal,,,,,Z3hF+Sg0bU6DTBgbFu4vYA,HMfsPltoEU+YCaq14ffVDA,,,N,0,0,,,2012-05-05 12:17,2012-05-16 14:02,admin,admin
899,130349,3769,19984,1191,1,0,N,N,N,CP_Drtn,TT_Task,DT_FixedDUR2,RV_OK,TK_NotStart,C-4-290,Engineer Release Pouring,,432,432,8,0,0,0,8,0,0,0,,,,2012-10-15 08:00,2012-10-15 16:00,,2012-08-13 08:00,2012-08-13 16:00,2012-08-13 08:00,2012-08-13 16:00,2012-08-13 08:00,2012-08-13 16:00,,2012-10-15 08:00,2012-10-15 16:00,,PT_Normal,,,,,5izubYOkYUqc9BVyc69ZfA,aFb5+Mi1pkmotvcVj4yZGQ,,,N,0,0,,,2012-05-05 12:17,2012-05-16 14:02,admin,admin
900,130350,3769,19984,1191,1,0,N,N,N,CP_Drtn,TT_Task,DT_FixedDUR2,RV_OK,TK_NotStart,C-4-300,Engineer inspection&approval for Slopped P.C,,424,0,8,0,0,0,8,0,0,0,,,,2012-10-14 08:00,2012-10-14 16:00,,2012-08-13 08:00,2012-08-13 16:00,2012-08-13 08:00,2012-08-13 16:00,2012-08-13 08:00,2012-08-13 16:00,,2012-10-14 08:00,2012-10-14 16:00,,PT_Normal,,,,,SGBJeW0uHECVGnna9Y+3Hw,c90whXo4HUqsnmyGeBmGBA,,,N,0,0,,,2012-05-05 12:17,2012-05-16 14:02,admin,admin
901,130351,3769,19933,1191,1,0,N,N,N,CP_Drtn,TT_Task,DT_FixedDUR2,RV_OK,TK_NotStart,C-3-230,Engineer inspection&approval for water proofing,,920,496,8,0,0,0,8,0,0,0,,,,2012-09-27 08:00,2012-09-27 16:00,,2012-05-16 08:00,2012-05-16 16:00,2012-05-16 08:00,2012-05-16 16:00,2012-05-16 08:00,2012-05-16 16:00,,2012-09-27 08:00,2012-09-27 16:00,,PT_Normal,,,,,oc9PTWGUnUyBX5zi1d+3yA,4lt9Wrz7Ukm+MNVphFzIFA,,,N,0,0,,,2012-05-05 12:17,2012-05-16 14:02,admin,admin
902,130352,3769,19933,1191,1,0,N,N,N,CP_Drtn,TT_Task,DT_FixedDUR2,RV_OK,TK_NotStart,C-3-250,Engineer inspection&approval for Heat insulation,,424,0,8,0,0,0,8,0,0,0,,,,2012-10-04 08:00,2012-10-04 16:00,,2012-08-04 08:00,2012-08-04 16:00,2012-08-04 08:00,2012-08-04 16:00,2012-08-04 08:00,2012-08-04 16:00,,2012-10-04 08:00,2012-10-04 16:00,,PT_Normal,,,,,zAWP9RUMoU6RdL0vMJNc8A,03wA+LuUhE6n+IsX7CsvRw,,,N,0,0,,,2012-05-05 12:17,2012-05-16 14:02,admin,admin
903,130353,3769,19933,1191,1,0,N,N,N,CP_Drtn,TT_Task,DT_FixedDUR2,RV_OK,TK_NotStart,C-3-320,Engineer inspection&approval for Footing insulation,,912,912,8,0,0,0,8,0,0,0,,,,2012-10-15 08:00,2012-10-15 16:00,,2012-06-04 08:00,2012-06-04 16:00,2012-06-04 08:00,2012-06-04 16:00,2012-06-04 08:00,2012-06-04 16:00,,2012-10-15 08:00,2012-10-15 16:00,,PT_Normal,,,,,Zu87ae+DTUyObCwElnV+7A,HMfsPltoEU+YCaq14ffVDA,,,N,0,0,,,2012-05-05 12:17,2012-05-16 14:02,admin,admin
904,130354,3769,19933,1191,1,0,N,N,N,CP_Drtn,TT_Task,DT_FixedDUR2,RV_OK,TK_NotStart,C-3-290,Engineer Release Pouring,,432,432,8,0,0,0,8,0,0,0,,,,2012-10-15 08:00,2012-10-15 16:00,,2012-08-13 08:00,2012-08-13 16:00,2012-08-13 08:00,2012-08-13 16:00,2012-08-13 08:00,2012-08-13 16:00,,2012-10-15 08:00,2012-10-15 16:00,,PT_Normal,,,,,yptaUmshuUGhvcYqI5lOvw,aFb5+Mi1pkmotvcVj4yZGQ,,,N,0,0,,,2012-05-05 12:17,2012-05-16 14:02,admin,admin
905,130355,3769,19933,1191,1,0,N,N,N,CP_Drtn,TT_Task,DT_FixedDUR2,RV_OK,TK_NotStart,C-3-300,Engineer inspection&approval for Slopped P.C,,424,0,8,0,0,0,8,0,0,0,,,,2012-10-14 08:00,2012-10-14 16:00,,2012-08-13 08:00,2012-08-13 16:00,2012-08-13 08:00,2012-08-13 16:00,2012-08-13 08:00,2012-08-13 16:00,,2012-10-14 08:00,2012-10-14 16:00,,PT_Normal,,,,,W5kXP63POEKo5jqZGCvC1A,c90whXo4HUqsnmyGeBmGBA,,,N,0,0,,,2012-05-05 12:17,2012-05-16 14:02,admin,admin
906,130356,3769,19983,1191,1,0,N,N,N,CP_Drtn,TT_Task,DT_FixedDUR2,RV_OK,TK_NotStart,C-2-230,Engineer inspection&approval for water proofing,,920,496,8,0,0,0,8,0,0,0,,,,2012-09-27 08:00,2012-09-27 16:00,,2012-05-16 08:00,2012-05-16 16:00,2012-05-16 08:00,2012-05-16 16:00,2012-05-16 08:00,2012-05-16 16:00,,2012-09-27 08:00,2012-09-27 16:00,,PT_Normal,,,,,KzpHkr/LI0KnhzhOnaHSSg,4lt9Wrz7Ukm+MNVphFzIFA,,,N,0,0,,,2012-05-05 12:17,2012-05-16 14:02,admin,admin
907,130357,3769,19983,1191,1,0,N,N,N,CP_Drtn,TT_Task,DT_FixedDUR2,RV_OK,TK_NotStart,C-2-250,Engineer inspection&approval for Heat insulation,,424,0,8,0,0,0,8,0,0,0,,,,2012-10-04 08:00,2012-10-04 16:00,,2012-08-04 08:00,2012-08-04 16:00,2012-08-04 08:00,2012-08-04 16:00,2012-08-04 08:00,2012-08-04 16:00,,2012-10-04 08:00,2012-10-04 16:00,,PT_Normal,,,,,M78JNVAW+027LbLiFiDIVA,03wA+LuUhE6n+IsX7CsvRw,,,N,0,0,,,2012-05-05 12:17,2012-05-16 14:02,admin,admin
908,130358,3769,19983,1191,1,0,N,N,N,CP_Drtn,TT_Task,DT_FixedDUR2,RV_OK,TK_NotStart,C-2-320,Engineer inspection&approval for Footing insulation,,1027.2,1027.2,8,0,0,0,8,0,0,0,,,,2012-10-15 08:00,2012-10-15 16:00,,2012-05-17 12:48,2012-05-19 12:48,2012-05-17 12:48,2012-05-19 12:48,2012-05-17 12:48,2012-05-19 12:48,,2012-10-15 08:00,2012-10-15 16:00,,PT_Normal,,,,,dnoqtGLTbUSqDjkxxscTmQ,HMfsPltoEU+YCaq14ffVDA,,,N,0,0,,,2012-05-05 12:17,2012-05-16 14:02,admin,admin
909,130359,3769,19983,1191,1,0,N,N,N,CP_Drtn,TT_Task,DT_FixedDUR2,RV_OK,TK_NotStart,C-2-290,Engineer Release Pouring,,432,432,8,0,0,0,8,0,0,0,,,,2012-10-15 08:00,2012-10-15 16:00,,2012-08-13 08:00,2012-08-13 16:00,2012-08-13 08:00,2012-08-13 16:00,2012-08-13 08:00,2012-08-13 16:00,,2012-10-15 08:00,2012-10-15 16:00,,PT_Normal,,,,,uiKfAgF54kOMPzNeEhLDzg,aFb5+Mi1pkmotvcVj4yZGQ,,,N,0,0,,,2012-05-05 12:17,2012-05-16 14:02,admin,admin
910,130360,3769,19983,1191,1,0,N,N,N,CP_Drtn,TT_Task,DT_FixedDUR2,RV_OK,TK_NotStart,C-2-300,Engineer inspection&approval for Slopped P.C,,424,0,8,0,0,0,8,0,0,0,,,,2012-10-14 08:00,2012-10-14 16:00,,2012-08-13 08:00,2012-08-13 16:00,2012-08-13 08:00,2012-08-13 16:00,2012-08-13 08:00,2012-08-13 16:00,,2012-10-14 08:00,2012-10-14 16:00,,PT_Normal,,,,,kLZxarK+5UarrjWFbRoOIA,c90whXo4HUqsnmyGeBmGBA,,,N,0,0,,,2012-05-05 12:17,2012-05-16 14:02,admin,admin
911,130361,3769,19944,1191,1,0,N,N,N,CP_Drtn,TT_Task,DT_FixedDUR2,RV_OK,TK_NotStart,C-1-230,Engineer inspection&approval for water proofing,,897.6,473.6,8,0,0,0,8,0,0,0,,,,2012-09-27 08:00,2012-09-27 16:00,,2012-05-19 14:24,2012-05-20 14:24,2012-05-19 14:24,2012-05-20 14:24,2012-05-19 14:24,2012-05-20 14:24,,2012-09-27 08:00,2012-09-27 16:00,,PT_Normal,,,,,5p+L1KhdJ0yeLY3Ocjabtg,4lt9Wrz7Ukm+MNVphFzIFA,,,N,0,0,,,2012-05-05 12:17,2012-05-16 14:02,admin,admin
912,130362,3769,19944,1191,1,0,N,N,N,CP_Drtn,TT_Task,DT_FixedDUR2,RV_OK,TK_NotStart,C-1-250,Engineer inspection&approval for Heat insulation,,424,0,8,0,0,0,8,0,0,0,,,,2012-10-04 08:00,2012-10-04 16:00,,2012-08-04 08:00,2012-08-04 16:00,2012-08-04 08:00,2012-08-04 16:00,2012-08-04 08:00,2012-08-04 16:00,,2012-10-04 08:00,2012-10-04 16:00,,PT_Normal,,,,,DiWhZnVpekSXz0xqxGQR9w,03wA+LuUhE6n+IsX7CsvRw,,,N,0,0,,,2012-05-05 12:17,2012-05-16 14:02,admin,admin
913,130363,3769,19944,1191,1,0,N,N,N,CP_Drtn,TT_Task,DT_FixedDUR2,RV_OK,TK_NotStart,C-1-320,Engineer inspection&approval for Footing insulation,,813.6,813.6,8,0,0,0,8,0,0,0,,,,2012-10-15 08:00,2012-10-15 16:00,,2012-06-18 10:24,2012-06-19 10:24,2012-06-18 10:24,2012-06-19 10:24,2012-06-18 10:24,2012-06-19 10:24,,2012-10-15 08:00,2012-10-15 16:00,,PT_Normal,,,,,pVtB8jBTPUKn6kMtmqIDKw,HMfsPltoEU+YCaq14ffVDA,,,N,0,0,,,2012-05-05 12:17,2012-05-16 14:02,admin,admin
914,130364,3769,19944,1191,1,0,N,N,N,CP_Drtn,TT_Task,DT_FixedDUR2,RV_OK,TK_NotStart,C-1-290,Engineer Release Pouring,,432,432,8,0,0,0,8,0,0,0,,,,2012-10-15 08:00,2012-10-15 16:00,,2012-08-13 08:00,2012-08-13 16:00,2012-08-13 08:00,2012-08-13 16:00,2012-08-13 08:00,2012-08-13 16:00,,2012-10-15 08:00,2012-10-15 16:00,,PT_Normal,,,,,oQJIqiMLSEOJLLC9e7bYEA,aFb5+Mi1pkmotvcVj4yZGQ,,,N,0,0,,,2012-05-05 12:17,2012-05-16 14:02,admin,admin
915,130365,3769,19944,1191,1,0,N,N,N,CP_Drtn,TT_Task,DT_FixedDUR2,RV_OK,TK_NotStart,C-1-300,Engineer inspection&approval for Slopped P.C,,424,0,8,0,0,0,8,0,0,0,,,,2012-10-14 08:00,2012-10-14 16:00,,2012-08-13 08:00,2012-08-13 16:00,2012-08-13 08:00,2012-08-13 16:00,2012-08-13 08:00,2012-08-13 16:00,,2012-10-14 08:00,2012-10-14 16:00,,PT_Normal,,,,,YMYWkRl+T029kMZnTdU6Aw,c90whXo4HUqsnmyGeBmGBA,,,N,0,0,,,2012-05-05 12:17,2012-05-16 14:02,admin,admin
916,130366,3769,19949,3746,1,0,N,N,N,CP_Drtn,TT_Task,DT_FixedDUR2,RV_OK,TK_NotStart,H-12-660,Engineer inspection&approval for water proofing,,24,0,8,0,0,0,8,0,0,0,,,,2012-10-06 08:00,2012-10-06 16:00,,2012-10-03 08:00,2012-10-03 16:00,2012-10-03 08:00,2012-10-03 16:00,2012-10-03 08:00,2012-10-03 16:00,,2012-10-06 08:00,2012-10-06 16:00,,PT_Normal,,,,,RLly2FF2eUO+XnnDgBD6zA,4lt9Wrz7Ukm+MNVphFzIFA,,,N,0,0,,,2012-05-05 12:17,2012-05-16 14:02,admin,admin
917,130367,3769,19949,3746,1,0,N,N,N,CP_Drtn,TT_Task,DT_FixedDUR2,RV_OK,TK_NotStart,H-12-680,Engineer inspection&approval for Heat insulation,,24,0,8,0,0,0,8,0,0,0,,,,2012-10-10 08:00,2012-10-10 16:00,,2012-10-07 08:00,2012-10-07 16:00,2012-10-07 08:00,2012-10-07 16:00,2012-10-07 08:00,2012-10-07 16:00,,2012-10-10 08:00,2012-10-10 16:00,,PT_Normal,,,,,F1kCRfEPM0yt0/bIkzgf9g,03wA+LuUhE6n+IsX7CsvRw,,,N,0,0,,,2012-05-05 12:17,2012-05-16 14:02,admin,admin
918,130368,3769,19949,3746,1,0,N,N,N,CP_Drtn,TT_Task,DT_FixedDUR2,RV_OK,TK_NotStart,H-12-440,Engineer inspection&approval for Footing insulation,,280,0,8,0,0,0,8,0,0,0,,,,2012-10-01 08:00,2012-10-01 16:00,,2012-08-27 08:00,2012-08-27 16:00,2012-08-27 08:00,2012-08-27 16:00,2012-08-27 08:00,2012-08-27 16:00,,2012-10-01 08:00,2012-10-01 16:00,,PT_Normal,,,,,xtXgMAc4eE6ZOVMUCeJoOQ,HMfsPltoEU+YCaq14ffVDA,,,N,0,0,,,2012-05-05 12:17,2012-05-16 14:02,admin,admin
919,130369,3769,19949,3746,1,0,N,N,N,CP_Drtn,TT_Task,DT_FixedDUR2,RV_OK,TK_NotStart,H-12-700,Engineer Release Pouring,,32,32,8,0,0,0,8,0,0,0,,,,2012-10-15 08:00,2012-10-15 16:00,,2012-10-11 08:00,2012-10-11 16:00,2012-10-11 08:00,2012-10-11 16:00,2012-10-11 08:00,2012-10-11 16:00,,2012-10-15 08:00,2012-10-15 16:00,,PT_Normal,,,,,lbAhXOpBL0mxUtpLUXCb1g,aFb5+Mi1pkmotvcVj4yZGQ,,,N,0,0,,,2012-05-05 12:17,2012-05-16 14:02,admin,admin
920,130370,3769,19949,3746,1,0,N,N,N,CP_Drtn,TT_Task,DT_FixedDUR2,RV_OK,TK_NotStart,H-12-710,Engineer inspection&approval for Slopped P.C,,24,0,8,0,0,0,8,0,0,0,,,,2012-10-14 08:00,2012-10-14 16:00,,2012-10-11 08:00,2012-10-11 16:00,2012-10-11 08:00,2012-10-11 16:00,2012-10-11 08:00,2012-10-11 16:00,,2012-10-14 08:00,2012-10-14 16:00,,PT_Normal,,,,,igS2md5ix0eKAYCgYNkxog,c90whXo4HUqsnmyGeBmGBA,,,N,0,0,,,2012-05-05 12:17,2012-05-16 14:02,admin,admin
921,130371,3769,19938,3746,1,0,N,N,N,CP_Drtn,TT_Task,DT_FixedDUR2,RV_OK,TK_NotStart,H-11-520,Engineer inspection&approval for water proofing,,672,192,8,0,0,0,8,0,0,0,,,,2012-10-07 08:00,2012-10-07 16:00,,2012-07-15 08:00,2012-07-15 16:00,2012-07-15 08:00,2012-07-15 16:00,2012-07-15 08:00,2012-07-15 16:00,,2012-10-07 08:00,2012-10-07 16:00,,PT_Normal,,,,,opuVFZNO402qP/ChvzIh7Q,4lt9Wrz7Ukm+MNVphFzIFA,,,N,0,0,,,2012-05-05 12:17,2012-05-16 14:02,admin,admin
922,130372,3769,19938,3746,1,0,N,N,N,CP_Drtn,TT_Task,DT_FixedDUR2,RV_OK,TK_NotStart,H-11-540,Engineer inspection&approval for Heat insulation,,480,0,8,0,0,0,8,0,0,0,,,,2012-10-11 08:00,2012-10-11 16:00,,2012-08-12 08:00,2012-08-12 16:00,2012-08-12 08:00,2012-08-12 16:00,2012-08-12 08:00,2012-08-12 16:00,,2012-10-11 08:00,2012-10-11 16:00,,PT_Normal,,,,,WKoNxO89HUmgAZvGabRlnw,03wA+LuUhE6n+IsX7CsvRw,,,N,0,0,,,2012-05-05 12:17,2012-05-16 14:02,admin,admin
923,130373,3769,19938,3746,1,0,N,N,N,CP_Drtn,TT_Task,DT_FixedDUR2,RV_OK,TK_NotStart,H-11-300,Engineer inspection&approval for Footing insulation,,952,0,8,0,0,0,8,0,0,0,,,,2012-10-03 08:00,2012-10-03 16:00,,2012-06-06 08:00,2012-06-06 16:00,2012-06-06 08:00,2012-06-06 16:00,2012-06-06 08:00,2012-06-06 16:00,,2012-10-03 08:00,2012-10-03 16:00,,PT_Normal,,,,,tK4M/xHVL0G6kxIV15DgzA,HMfsPltoEU+YCaq14ffVDA,,,N,0,0,,,2012-05-05 12:17,2012-05-16 14:02,admin,admin
924,130374,3769,19938,3746,1,0,N,N,N,CP_Drtn,TT_Task,DT_FixedDUR2,RV_OK,TK_NotStart,H-11-560,Engineer Release Pouring,,488,488,8,0,0,0,8,0,0,0,,,,2012-10-15 08:00,2012-10-15 16:00,,2012-08-15 08:00,2012-08-15 16:00,2012-08-15 08:00,2012-08-15 16:00,2012-08-15 08:00,2012-08-15 16:00,,2012-10-15 08:00,2012-10-15 16:00,,PT_Normal,,,,,ws8/ybW++0O0OjgG/La9Zg,aFb5+Mi1pkmotvcVj4yZGQ,,,N,0,0,,,2012-05-05 12:17,2012-05-16 14:02,admin,admin
925,130375,3769,19938,3746,1,0,N,N,N,CP_Drtn,TT_Task,DT_FixedDUR2,RV_OK,TK_NotStart,H-11-570,Engineer inspection&approval for Slopped P.C,,480,0,8,0,0,0,8,0,0,0,,,,2012-10-14 08:00,2012-10-14 16:00,,2012-08-15 08:00,2012-08-15 16:00,2012-08-15 08:00,2012-08-15 16:00,2012-08-15 08:00,2012-08-15 16:00,,2012-10-14 08:00,2012-10-14 16:00,,PT_Normal,,,,,5MdTlVSCp0a9DNZZK4UyXw,c90whXo4HUqsnmyGeBmGBA,,,N,0,0,,,2012-05-05 12:17,2012-05-16 14:02,admin,admin
926,130376,3769,19951,3746,1,0,N,N,N,CP_Drtn,TT_Task,DT_FixedDUR2,RV_OK,TK_NotStart,H-10-520,Engineer inspection&approval for water proofing,,736,264,8,0,0,0,8,0,0,0,,,,2012-10-06 08:00,2012-10-06 16:00,,2012-07-06 08:00,2012-07-06 16:00,2012-07-06 08:00,2012-07-06 16:00,2012-07-06 08:00,2012-07-06 16:00,,2012-10-06 08:00,2012-10-06 16:00,,PT_Normal,,,,,ofVuS9a+SkyhEmiKIp15RQ,4lt9Wrz7Ukm+MNVphFzIFA,,,N,0,0,,,2012-05-05 12:17,2012-05-16 14:02,admin,admin
927,130377,3769,19951,3746,1,0,N,N,N,CP_Drtn,TT_Task,DT_FixedDUR2,RV_OK,TK_NotStart,H-10-540,Engineer inspection&approval for Heat insulation,,472,0,8,0,0,0,8,0,0,0,,,,2012-10-10 08:00,2012-10-10 16:00,,2012-08-12 08:00,2012-08-12 16:00,2012-08-12 08:00,2012-08-12 16:00,2012-08-12 08:00,2012-08-12 16:00,,2012-10-10 08:00,2012-10-10 16:00,,PT_Normal,,,,,eoz9jmAWRUi1cXaMwW41OQ,03wA+LuUhE6n+IsX7CsvRw,,,N,0,0,,,2012-05-05 12:17,2012-05-16 14:02,admin,admin
928,130378,3769,19951,3746,1,0,N,N,N,CP_Drtn,TT_Task,DT_FixedDUR2,RV_OK,TK_NotStart,H-10-300,Engineer inspection&approval for Footing insulation,,1104,0,8,0,0,0,8,0,0,0,,,,2012-10-08 08:00,2012-10-08 16:00,,2012-05-23 08:00,2012-05-23 16:00,2012-05-23 08:00,2012-05-23 16:00,2012-05-23 08:00,2012-05-23 16:00,,2012-10-08 08:00,2012-10-08 16:00,,PT_Normal,,,,,eJMDNPMcY0qd+eSgteTpEQ,HMfsPltoEU+YCaq14ffVDA,,,N,0,0,,,2012-05-05 12:17,2012-05-16 14:02,admin,admin
929,130379,3769,19951,3746,1,0,N,N,N,CP_Drtn,TT_Task,DT_FixedDUR2,RV_OK,TK_NotStart,H-10-560,Engineer Release Pouring,,480,480,8,0,0,0,8,0,0,0,,,,2012-10-15 08:00,2012-10-15 16:00,,2012-08-16 08:00,2012-08-16 16:00,2012-08-16 08:00,2012-08-16 16:00,2012-08-16 08:00,2012-08-16 16:00,,2012-10-15 08:00,2012-10-15 16:00,,PT_Normal,,,,,e/JPkX+yi0uBanqgdsj7Lw,aFb5+Mi1pkmotvcVj4yZGQ,,,N,0,0,,,2012-05-05 12:17,2012-05-16 14:02,admin,admin
930,130380,3769,19951,3746,1,0,N,N,N,CP_Drtn,TT_Task,DT_FixedDUR2,RV_OK,TK_NotStart,H-10-570,Engineer inspection&approval for Slopped P.C,,472,0,8,0,0,0,8,0,0,0,,,,2012-10-14 08:00,2012-10-14 16:00,,2012-08-16 08:00,2012-08-16 16:00,2012-08-16 08:00,2012-08-16 16:00,2012-08-16 08:00,2012-08-16 16:00,,2012-10-14 08:00,2012-10-14 16:00,,PT_Normal,,,,,clMZVb8n+UCJZU5pz4itOg,c90whXo4HUqsnmyGeBmGBA,,,N,0,0,,,2012-05-05 12:17,2012-05-16 14:02,admin,admin
931,130381,3769,19976,3746,1,0,N,N,N,CP_Drtn,TT_Task,DT_FixedDUR2,RV_OK,TK_NotStart,H-1-660,Engineer inspection&approval for water proofing,,352,0,8,0,0,0,8,0,0,0,,,,2012-10-05 08:00,2012-10-05 16:00,,2012-08-22 08:00,2012-08-22 16:00,2012-08-22 08:00,2012-08-22 16:00,2012-08-22 08:00,2012-08-22 16:00,,2012-10-05 08:00,2012-10-05 16:00,,PT_Normal,,,,,E0Pd8ME9sEi60Ep4Aokrdg,4lt9Wrz7Ukm+MNVphFzIFA,,,N,0,0,,,2012-05-05 12:17,2012-05-16 14:02,admin,admin
932,130382,3769,19976,3746,1,0,N,N,N,CP_Drtn,TT_Task,DT_FixedDUR2,RV_OK,TK_NotStart,H-1-680,Engineer inspection&approval for Heat insulation,,352,0,8,0,0,0,8,0,0,0,,,,2012-10-11 08:00,2012-10-11 16:00,,2012-08-28 08:00,2012-08-28 16:00,2012-08-28 08:00,2012-08-28 16:00,2012-08-28 08:00,2012-08-28 16:00,,2012-10-11 08:00,2012-10-11 16:00,,PT_Normal,,,,,0dDD/c5+oESvMpoU9/4liQ,03wA+LuUhE6n+IsX7CsvRw,,,N,0,0,,,2012-05-05 12:17,2012-05-16 14:02,admin,admin
933,130383,3769,19976,3746,1,0,N,N,N,CP_Drtn,TT_Task,DT_FixedDUR2,RV_OK,TK_NotStart,H-1-440,Engineer inspection&approval for Footing insulation,,744,0,8,0,0,0,8,0,0,0,,,,2012-10-03 08:00,2012-10-03 16:00,,2012-07-02 08:00,2012-07-02 16:00,2012-07-02 08:00,2012-07-02 16:00,2012-07-02 08:00,2012-07-02 16:00,,2012-10-03 08:00,2012-10-03 16:00,,PT_Normal,,,,,bJ3x43AD8UCNQsofmh8yIg,HMfsPltoEU+YCaq14ffVDA,,,N,0,0,,,2012-05-05 12:17,2012-05-16 14:02,admin,admin
934,130384,3769,19976,3746,1,0,N,N,N,CP_Drtn,TT_Task,DT_FixedDUR2,RV_OK,TK_NotStart,H-1-700,Engineer Release Pouring,,352,0,8,0,0,0,8,0,0,0,,,,2012-10-14 08:00,2012-10-14 16:00,,2012-08-31 08:00,2012-08-31 16:00,2012-08-31 08:00,2012-08-31 16:00,2012-08-31 08:00,2012-08-31 16:00,,2012-10-14 08:00,2012-10-14 16:00,,PT_Normal,,,,,6/e7QTzMGUSGXBsPu2TuSQ,aFb5+Mi1pkmotvcVj4yZGQ,,,N,0,0,,,2012-05-05 12:17,2012-05-16 14:02,admin,admin
935,130385,3769,19976,3746,1,0,N,N,N,CP_Drtn,TT_Task,DT_FixedDUR2,RV_OK,TK_NotStart,H-1-710,Engineer inspection&approval for Slopped P.C,,352,0,8,0,0,0,8,0,0,0,,,,2012-10-14 08:00,2012-10-14 16:00,,2012-08-31 08:00,2012-08-31 16:00,2012-08-31 08:00,2012-08-31 16:00,2012-08-31 08:00,2012-08-31 16:00,,2012-10-14 08:00,2012-10-14 16:00,,PT_Normal,,,,,1txqv4cq5kKNGh2TQhkgDQ,c90whXo4HUqsnmyGeBmGBA,,,N,0,0,,,2012-05-05 12:17,2012-05-16 14:02,admin,admin
936,130386,3769,19967,3746,1,0,N,N,N,CP_Drtn,TT_Task,DT_FixedDUR2,RV_OK,TK_NotStart,H-2-520,Engineer inspection&approval for water proofing,,532,52,8,0,0,0,8,0,0,0,,,,2012-10-07 08:00,2012-10-07 16:00,,2012-08-01 12:00,2012-08-02 12:00,2012-08-01 12:00,2012-08-02 12:00,2012-08-01 12:00,2012-08-02 12:00,,2012-10-07 08:00,2012-10-07 16:00,,PT_Normal,,,,,bUdXALqqMkeA8tqI0AP9jA,4lt9Wrz7Ukm+MNVphFzIFA,,,N,0,0,,,2012-05-05 12:17,2012-05-16 14:02,admin,admin
937,130387,3769,19967,3746,1,0,N,N,N,CP_Drtn,TT_Task,DT_FixedDUR2,RV_OK,TK_NotStart,H-2-540,Engineer inspection&approval for Heat insulation,,480,0,8,0,0,0,8,0,0,0,,,,2012-10-11 08:00,2012-10-11 16:00,,2012-08-12 08:00,2012-08-12 16:00,2012-08-12 08:00,2012-08-12 16:00,2012-08-12 08:00,2012-08-12 16:00,,2012-10-11 08:00,2012-10-11 16:00,,PT_Normal,,,,,vtngXt0ZEk+TW+dhy19g+Q,03wA+LuUhE6n+IsX7CsvRw,,,N,0,0,,,2012-05-05 12:17,2012-05-16 14:02,admin,admin
938,130388,3769,19967,3746,1,0,N,N,N,CP_Drtn,TT_Task,DT_FixedDUR2,RV_OK,TK_NotStart,H-2-300,Engineer inspection&approval for Footing insulation,,788,0,8,0,0,0,8,0,0,0,,,,2012-10-04 08:00,2012-10-04 16:00,,2012-06-27 12:00,2012-06-28 12:00,2012-06-27 12:00,2012-06-28 12:00,2012-06-27 12:00,2012-06-28 12:00,,2012-10-04 08:00,2012-10-04 16:00,,PT_Normal,,,,,TlQnowD97EeCNukUiVjKcQ,HMfsPltoEU+YCaq14ffVDA,,,N,0,0,,,2012-05-05 12:17,2012-05-16 14:02,admin,admin
939,130389,3769,19967,3746,1,0,N,N,N,CP_Drtn,TT_Task,DT_FixedDUR2,RV_OK,TK_NotStart,H-2-560,Engineer Release Pouring,,488,488,8,0,0,0,8,0,0,0,,,,2012-10-15 08:00,2012-10-15 16:00,,2012-08-15 08:00,2012-08-15 16:00,2012-08-15 08:00,2012-08-15 16:00,2012-08-15 08:00,2012-08-15 16:00,,2012-10-15 08:00,2012-10-15 16:00,,PT_Normal,,,,,iiRrZRPhkUmRPIKnE7jZzg,aFb5+Mi1pkmotvcVj4yZGQ,,,N,0,0,,,2012-05-05 12:17,2012-05-16 14:02,admin,admin
940,130390,3769,19967,3746,1,0,N,N,N,CP_Drtn,TT_Task,DT_FixedDUR2,RV_OK,TK_NotStart,H-2-570,Engineer inspection&approval for Slopped P.C,,480,0,8,0,0,0,8,0,0,0,,,,2012-10-14 08:00,2012-10-14 16:00,,2012-08-15 08:00,2012-08-15 16:00,2012-08-15 08:00,2012-08-15 16:00,2012-08-15 08:00,2012-08-15 16:00,,2012-10-14 08:00,2012-10-14 16:00,,PT_Normal,,,,,eMT6OuEMxk+/iT2JSjfoRA,c90whXo4HUqsnmyGeBmGBA,,,N,0,0,,,2012-05-05 12:17,2012-05-16 14:02,admin,admin
941,130391,3769,19988,3746,1,0,N,N,N,CP_Drtn,TT_Task,DT_FixedDUR2,RV_OK,TK_NotStart,H-3-520,Engineer inspection&approval for water proofing,,736,264,8,0,0,0,8,0,0,0,,,,2012-10-06 08:00,2012-10-06 16:00,,2012-07-06 08:00,2012-07-06 16:00,2012-07-06 08:00,2012-07-06 16:00,2012-07-06 08:00,2012-07-06 16:00,,2012-10-06 08:00,2012-10-06 16:00,,PT_Normal,,,,,LWBo2+oCVEuPEdUS8B4Arw,4lt9Wrz7Ukm+MNVphFzIFA,,,N,0,0,,,2012-05-05 12:17,2012-05-16 14:02,admin,admin
942,130392,3769,19988,3746,1,0,N,N,N,CP_Drtn,TT_Task,DT_FixedDUR2,RV_OK,TK_NotStart,H-3-540,Engineer inspection&approval for Heat insulation,,472,0,8,0,0,0,8,0,0,0,,,,2012-10-10 08:00,2012-10-10 16:00,,2012-08-12 08:00,2012-08-12 16:00,2012-08-12 08:00,2012-08-12 16:00,2012-08-12 08:00,2012-08-12 16:00,,2012-10-10 08:00,2012-10-10 16:00,,PT_Normal,,,,,f1MU1UcP3UGK7IVb+hRMqA,03wA+LuUhE6n+IsX7CsvRw,,,N,0,0,,,2012-05-05 12:17,2012-05-16 14:02,admin,admin
943,130393,3769,19988,3746,1,0,N,N,N,CP_Drtn,TT_Task,DT_FixedDUR2,RV_OK,TK_NotStart,H-3-300,Engineer inspection&approval for Footing insulation,,1048,0,8,0,0,0,8,0,0,0,,,,2012-10-01 08:00,2012-10-01 16:00,,2012-05-23 08:00,2012-05-23 16:00,2012-05-23 08:00,2012-05-23 16:00,2012-05-23 08:00,2012-05-23 16:00,,2012-10-01 08:00,2012-10-01 16:00,,PT_Normal,,,,,EkFur+tAxk6WWJRJVxA7jg,HMfsPltoEU+YCaq14ffVDA,,,N,0,0,,,2012-05-05 12:17,2012-05-16 14:02,admin,admin
944,130394,3769,19988,3746,1,0,N,N,N,CP_Drtn,TT_Task,DT_FixedDUR2,RV_OK,TK_NotStart,H-3-560,Engineer Release Pouring,,472,0,8,0,0,0,8,0,0,0,,,,2012-10-14 08:00,2012-10-14 16:00,,2012-08-16 08:00,2012-08-16 16:00,2012-08-16 08:00,2012-08-16 16:00,2012-08-16 08:00,2012-08-16 16:00,,2012-10-14 08:00,2012-10-14 16:00,,PT_Normal,,,,,U+vLBBH/7kuiYta3r11xnA,aFb5+Mi1pkmotvcVj4yZGQ,,,N,0,0,,,2012-05-05 12:17,2012-05-16 14:02,admin,admin
945,130395,3769,19988,3746,1,0,N,N,N,CP_Drtn,TT_Task,DT_FixedDUR2,RV_OK,TK_NotStart,H-3-570,Engineer inspection&approval for Slopped P.C,,472,0,8,0,0,0,8,0,0,0,,,,2012-10-14 08:00,2012-10-14 16:00,,2012-08-16 08:00,2012-08-16 16:00,2012-08-16 08:00,2012-08-16 16:00,2012-08-16 08:00,2012-08-16 16:00,,2012-10-14 08:00,2012-10-14 16:00,,PT_Normal,,,,,4ESIFKSUBk2OaJV1kaqgyg,c90whXo4HUqsnmyGeBmGBA,,,N,0,0,,,2012-05-05 12:17,2012-05-16 14:02,admin,admin
946,130396,3769,19964,3746,1,0,N,N,N,CP_Drtn,TT_Task,DT_FixedDUR2,RV_OK,TK_NotStart,H-4-520,Engineer inspection&approval for water proofing,,536,64,8,0,0,0,8,0,0,0,,,,2012-10-06 08:00,2012-10-06 16:00,,2012-07-31 08:00,2012-07-31 16:00,2012-07-31 08:00,2012-07-31 16:00,2012-07-31 08:00,2012-07-31 16:00,,2012-10-06 08:00,2012-10-06 16:00,,PT_Normal,,,,,ewzxB6PgkEaRk48WySK0oQ,4lt9Wrz7Ukm+MNVphFzIFA,,,N,0,0,,,2012-05-05 12:17,2012-05-16 14:02,admin,admin
947,130397,3769,19964,3746,1,0,N,N,N,CP_Drtn,TT_Task,DT_FixedDUR2,RV_OK,TK_NotStart,H-4-540,Engineer inspection&approval for Heat insulation,,472,0,8,0,0,0,8,0,0,0,,,,2012-10-10 08:00,2012-10-10 16:00,,2012-08-12 08:00,2012-08-12 16:00,2012-08-12 08:00,2012-08-12 16:00,2012-08-12 08:00,2012-08-12 16:00,,2012-10-10 08:00,2012-10-10 16:00,,PT_Normal,,,,,BXlwoi5Rj02+HlYTiG+94Q,03wA+LuUhE6n+IsX7CsvRw,,,N,0,0,,,2012-05-05 12:17,2012-05-16 14:02,admin,admin
948,130398,3769,19964,3746,1,0,N,N,N,CP_Drtn,TT_Task,DT_FixedDUR2,RV_OK,TK_NotStart,H-4-300,Engineer inspection&approval for Footing insulation,,1008,0,8,0,0,0,8,0,0,0,,,,2012-10-01 08:00,2012-10-01 16:00,,2012-05-28 08:00,2012-05-28 16:00,2012-05-28 08:00,2012-05-28 16:00,2012-05-28 08:00,2012-05-28 16:00,,2012-10-01 08:00,2012-10-01 16:00,,PT_Normal,,,,,Z+2cH3qrDESAJJh7r9FbfQ,HMfsPltoEU+YCaq14ffVDA,,,N,0,0,,,2012-05-05 12:17,2012-05-16 14:02,admin,admin
949,130399,3769,19964,3746,1,0,N,N,N,CP_Drtn,TT_Task,DT_FixedDUR2,RV_OK,TK_NotStart,H-4-560,Engineer Release Pouring,,480,480,8,0,0,0,8,0,0,0,,,,2012-10-15 08:00,2012-10-15 16:00,,2012-08-16 08:00,2012-08-16 16:00,2012-08-16 08:00,2012-08-16 16:00,2012-08-16 08:00,2012-08-16 16:00,,2012-10-15 08:00,2012-10-15 16:00,,PT_Normal,,,,,gvcijzz9s0WCpk03YB/a5g,aFb5+Mi1pkmotvcVj4yZGQ,,,N,0,0,,,2012-05-05 12:17,2012-05-16 14:02,admin,admin
950,130400,3769,19964,3746,1,0,N,N,N,CP_Drtn,TT_Task,DT_FixedDUR2,RV_OK,TK_NotStart,H-4-570,Engineer inspection&approval for Slopped P.C,,472,0,8,0,0,0,8,0,0,0,,,,2012-10-14 08:00,2012-10-14 16:00,,2012-08-16 08:00,2012-08-16 16:00,2012-08-16 08:00,2012-08-16 16:00,2012-08-16 08:00,2012-08-16 16:00,,2012-10-14 08:00,2012-10-14 16:00,,PT_Normal,,,,,a7Ksopl/wESo/vUfM3B8eA,c90whXo4HUqsnmyGeBmGBA,,,N,0,0,,,2012-05-05 12:17,2012-05-16 14:02,admin,admin
951,130401,3769,19985,3746,1,0,N,N,N,CP_Drtn,TT_Task,DT_FixedDUR2,RV_OK,TK_NotStart,H-5-520,Engineer inspection&approval for water proofing,,736,264,8,0,0,0,8,0,0,0,,,,2012-10-06 08:00,2012-10-06 16:00,,2012-07-06 08:00,2012-07-06 16:00,2012-07-06 08:00,2012-07-06 16:00,2012-07-06 08:00,2012-07-06 16:00,,2012-10-06 08:00,2012-10-06 16:00,,PT_Normal,,,,,jOMcBluRoUeaPTT3zbHqRA,4lt9Wrz7Ukm+MNVphFzIFA,,,N,0,0,,,2012-05-05 12:17,2012-05-16 14:02,admin,admin
952,130402,3769,19985,3746,1,0,N,N,N,CP_Drtn,TT_Task,DT_FixedDUR2,RV_OK,TK_NotStart,H-5-540,Engineer inspection&approval for Heat insulation,,472,0,8,0,0,0,8,0,0,0,,,,2012-10-10 08:00,2012-10-10 16:00,,2012-08-12 08:00,2012-08-12 16:00,2012-08-12 08:00,2012-08-12 16:00,2012-08-12 08:00,2012-08-12 16:00,,2012-10-10 08:00,2012-10-10 16:00,,PT_Normal,,,,,7WfJmDTbaUWg4DRYsry2YQ,03wA+LuUhE6n+IsX7CsvRw,,,N,0,0,,,2012-05-05 12:17,2012-05-16 14:02,admin,admin
953,130403,3769,19985,3746,1,0,N,N,N,CP_Drtn,TT_Task,DT_FixedDUR2,RV_OK,TK_NotStart,H-5-300,Engineer inspection&approval for Footing insulation,,1048,0,8,0,0,0,8,0,0,0,,,,2012-10-01 08:00,2012-10-01 16:00,,2012-05-23 08:00,2012-05-23 16:00,2012-05-23 08:00,2012-05-23 16:00,2012-05-23 08:00,2012-05-23 16:00,,2012-10-01 08:00,2012-10-01 16:00,,PT_Normal,,,,,k7b0WM+7rEWawODfuNkUKg,HMfsPltoEU+YCaq14ffVDA,,,N,0,0,,,2012-05-05 12:17,2012-05-16 14:02,admin,admin
954,130404,3769,19985,3746,1,0,N,N,N,CP_Drtn,TT_Task,DT_FixedDUR2,RV_OK,TK_NotStart,H-5-560,Engineer Release Pouring,,480,480,8,0,0,0,8,0,0,0,,,,2012-10-15 08:00,2012-10-15 16:00,,2012-08-16 08:00,2012-08-16 16:00,2012-08-16 08:00,2012-08-16 16:00,2012-08-16 08:00,2012-08-16 16:00,,2012-10-15 08:00,2012-10-15 16:00,,PT_Normal,,,,,03WwAOJStUSEEYnF4MBtgQ,aFb5+Mi1pkmotvcVj4yZGQ,,,N,0,0,,,2012-05-05 12:17,2012-05-16 14:02,admin,admin
955,130405,3769,19985,3746,1,0,N,N,N,CP_Drtn,TT_Task,DT_FixedDUR2,RV_OK,TK_NotStart,H-5-570,Engineer inspection&approval for Slopped P.C,,472,0,8,0,0,0,8,0,0,0,,,,2012-10-14 08:00,2012-10-14 16:00,,2012-08-16 08:00,2012-08-16 16:00,2012-08-16 08:00,2012-08-16 16:00,2012-08-16 08:00,2012-08-16 16:00,,2012-10-14 08:00,2012-10-14 16:00,,PT_Normal,,,,,ELUcoqZPXEiZlxR0tFy94A,c90whXo4HUqsnmyGeBmGBA,,,N,0,0,,,2012-05-05 12:17,2012-05-16 14:02,admin,admin
956,130406,3769,19958,3746,1,0,N,N,N,CP_Drtn,TT_Task,DT_FixedDUR2,RV_OK,TK_NotStart,H-6-520,Engineer inspection&approval for water proofing,,736,264,8,0,0,0,8,0,0,0,,,,2012-10-06 08:00,2012-10-06 16:00,,2012-07-06 08:00,2012-07-06 16:00,2012-07-06 08:00,2012-07-06 16:00,2012-07-06 08:00,2012-07-06 16:00,,2012-10-06 08:00,2012-10-06 16:00,,PT_Normal,,,,,MpyzUcbfa0K93xSHU1FexA,4lt9Wrz7Ukm+MNVphFzIFA,,,N,0,0,,,2012-05-05 12:17,2012-05-16 14:02,admin,admin
957,130407,3769,19958,3746,1,0,N,N,N,CP_Drtn,TT_Task,DT_FixedDUR2,RV_OK,TK_NotStart,H-6-540,Engineer inspection&approval for Heat insulation,,472,0,8,0,0,0,8,0,0,0,,,,2012-10-10 08:00,2012-10-10 16:00,,2012-08-12 08:00,2012-08-12 16:00,2012-08-12 08:00,2012-08-12 16:00,2012-08-12 08:00,2012-08-12 16:00,,2012-10-10 08:00,2012-10-10 16:00,,PT_Normal,,,,,GN2He8dL+02as2Lk6o1QcQ,03wA+LuUhE6n+IsX7CsvRw,,,N,0,0,,,2012-05-05 12:17,2012-05-16 14:02,admin,admin
958,130408,3769,19958,3746,1,0,N,N,N,CP_Drtn,TT_Task,DT_FixedDUR2,RV_OK,TK_NotStart,H-6-300,Engineer inspection&approval for Footing insulation,,1048,0,8,0,0,0,8,0,0,0,,,,2012-10-01 08:00,2012-10-01 16:00,,2012-05-23 08:00,2012-05-23 16:00,2012-05-23 08:00,2012-05-23 16:00,2012-05-23 08:00,2012-05-23 16:00,,2012-10-01 08:00,2012-10-01 16:00,,PT_Normal,,,,,WeA0n76RJU+O702TQgYodA,HMfsPltoEU+YCaq14ffVDA,,,N,0,0,,,2012-05-05 12:17,2012-05-16 14:02,admin,admin
959,130409,3769,19958,3746,1,0,N,N,N,CP_Drtn,TT_Task,DT_FixedDUR2,RV_OK,TK_NotStart,H-6-560,Engineer Release Pouring,,480,480,8,0,0,0,8,0,0,0,,,,2012-10-15 08:00,2012-10-15 16:00,,2012-08-16 08:00,2012-08-16 16:00,2012-08-16 08:00,2012-08-16 16:00,2012-08-16 08:00,2012-08-16 16:00,,2012-10-15 08:00,2012-10-15 16:00,,PT_Normal,,,,,4sVH/SYWSEe6Gy9KLVnrcA,aFb5+Mi1pkmotvcVj4yZGQ,,,N,0,0,,,2012-05-05 12:17,2012-05-16 14:02,admin,admin
960,130410,3769,19958,3746,1,0,N,N,N,CP_Drtn,TT_Task,DT_FixedDUR2,RV_OK,TK_NotStart,H-6-570,Engineer inspection&approval for Slopped P.C,,472,0,8,0,0,0,8,0,0,0,,,,2012-10-14 08:00,2012-10-14 16:00,,2012-08-16 08:00,2012-08-16 16:00,2012-08-16 08:00,2012-08-16 16:00,2012-08-16 08:00,2012-08-16 16:00,,2012-10-14 08:00,2012-10-14 16:00,,PT_Normal,,,,,uc6zaCo1lEq07+pjOKKPWg,c90whXo4HUqsnmyGeBmGBA,,,N,0,0,,,2012-05-05 12:17,2012-05-16 14:02,admin,admin
961,130411,3769,19928,3746,1,0,N,N,N,CP_Drtn,TT_Task,DT_FixedDUR2,RV_OK,TK_NotStart,H-7-520,Engineer inspection&approval for water proofing,,0,0,8,0,0,0,8,0,0,0,,,,2012-10-06 08:00,2012-10-06 16:00,,2012-10-06 08:00,2012-10-06 16:00,2012-10-06 08:00,2012-10-06 16:00,2012-10-06 08:00,2012-10-06 16:00,,2012-10-06 08:00,2012-10-06 16:00,,PT_Normal,,,,,JMb7jY6MCkqJawghyJIf/w,4lt9Wrz7Ukm+MNVphFzIFA,,,Y,0,0,,,2012-05-05 12:17,2012-05-16 14:02,admin,admin
962,130412,3769,19928,3746,1,0,N,N,N,CP_Drtn,TT_Task,DT_FixedDUR2,RV_OK,TK_NotStart,H-7-540,Engineer inspection&approval for Heat insulation,,0,0,8,0,0,0,8,0,0,0,,,,2012-10-10 08:00,2012-10-10 16:00,,2012-10-10 08:00,2012-10-10 16:00,2012-10-10 08:00,2012-10-10 16:00,2012-10-10 08:00,2012-10-10 16:00,,2012-10-10 08:00,2012-10-10 16:00,,PT_Normal,,,,,i2xcHFEA5Uqq4Ba6GYW0qQ,03wA+LuUhE6n+IsX7CsvRw,,,Y,0,0,,,2012-05-05 12:17,2012-05-16 14:02,admin,admin
963,130413,3769,19928,3746,1,0,N,N,N,CP_Drtn,TT_Task,DT_FixedDUR2,RV_OK,TK_NotStart,H-7-300,Engineer inspection&approval for Footing insulation,,440,0,8,0,0,0,8,0,0,0,,,,2012-10-01 08:00,2012-10-01 16:00,,2012-08-07 08:00,2012-08-07 16:00,2012-08-07 08:00,2012-08-07 16:00,2012-08-07 08:00,2012-08-07 16:00,,2012-10-01 08:00,2012-10-01 16:00,,PT_Normal,,,,,1qOq5PfqXE2FXYJDz2Cr1Q,HMfsPltoEU+YCaq14ffVDA,,,N,0,0,,,2012-05-05 12:17,2012-05-16 14:02,admin,admin
964,130414,3769,19928,3746,1,0,N,N,N,CP_Drtn,TT_Task,DT_FixedDUR2,RV_OK,TK_NotStart,H-7-560,Engineer Release Pouring,,8,8,8,0,0,0,8,0,0,0,,,,2012-10-15 08:00,2012-10-15 16:00,,2012-10-14 08:00,2012-10-14 16:00,2012-10-14 08:00,2012-10-14 16:00,2012-10-14 08:00,2012-10-14 16:00,,2012-10-15 08:00,2012-10-15 16:00,,PT_Normal,,,,,v8f1q+1bIEKKjBM0Z2jAGw,aFb5+Mi1pkmotvcVj4yZGQ,,,N,0,0,,,2012-05-05 12:17,2012-05-16 14:02,admin,admin
965,130415,3769,19928,3746,1,0,N,N,N,CP_Drtn,TT_Task,DT_FixedDUR2,RV_OK,TK_NotStart,H-7-570,Engineer inspection&approval for Slopped P.C,,0,0,8,0,0,0,8,0,0,0,,,,2012-10-14 08:00,2012-10-14 16:00,,2012-10-14 08:00,2012-10-14 16:00,2012-10-14 08:00,2012-10-14 16:00,2012-10-14 08:00,2012-10-14 16:00,,2012-10-14 08:00,2012-10-14 16:00,,PT_Normal,,,,,RHoRcbSa0U+LjJ48zlgJwg,c90whXo4HUqsnmyGeBmGBA,,,Y,0,0,,,2012-05-05 12:17,2012-05-16 14:02,admin,admin
966,130416,3769,19920,3746,1,0,N,N,N,CP_Drtn,TT_Task,DT_FixedDUR2,RV_OK,TK_NotStart,H-8-520,Engineer inspection&approval for water proofing,,684,212,8,0,0,0,8,0,0,0,,,,2012-10-06 08:00,2012-10-06 16:00,,2012-07-12 12:00,2012-07-13 12:00,2012-07-12 12:00,2012-07-13 12:00,2012-07-12 12:00,2012-07-13 12:00,,2012-10-06 08:00,2012-10-06 16:00,,PT_Normal,,,,,Muy+n7NTFECmaq5Jzxu2cw,4lt9Wrz7Ukm+MNVphFzIFA,,,N,0,0,,,2012-05-05 12:17,2012-05-16 14:02,admin,admin
967,130417,3769,19920,3746,1,0,N,N,N,CP_Drtn,TT_Task,DT_FixedDUR2,RV_OK,TK_NotStart,H-8-540,Engineer inspection&approval for Heat insulation,,472,0,8,0,0,0,8,0,0,0,,,,2012-10-10 08:00,2012-10-10 16:00,,2012-08-12 08:00,2012-08-12 16:00,2012-08-12 08:00,2012-08-12 16:00,2012-08-12 08:00,2012-08-12 16:00,,2012-10-10 08:00,2012-10-10 16:00,,PT_Normal,,,,,qbTRhXN7WESSyrSDs03kPQ,03wA+LuUhE6n+IsX7CsvRw,,,N,0,0,,,2012-05-05 12:17,2012-05-16 14:02,admin,admin
968,130418,3769,19920,3746,1,0,N,N,N,CP_Drtn,TT_Task,DT_FixedDUR2,RV_OK,TK_NotStart,H-8-300,Engineer inspection&approval for Footing insulation,,1048,0,8,0,0,0,8,0,0,0,,,,2012-10-01 08:00,2012-10-01 16:00,,2012-05-23 08:00,2012-05-23 16:00,2012-05-23 08:00,2012-05-23 16:00,2012-05-23 08:00,2012-05-23 16:00,,2012-10-01 08:00,2012-10-01 16:00,,PT_Normal,,,,,6ewu6KoKaE+Goq832Uu1WA,HMfsPltoEU+YCaq14ffVDA,,,N,0,0,,,2012-05-05 12:17,2012-05-16 14:02,admin,admin
969,130419,3769,19920,3746,1,0,N,N,N,CP_Drtn,TT_Task,DT_FixedDUR2,RV_OK,TK_NotStart,H-8-560,Engineer Release Pouring,,480,480,8,0,0,0,8,0,0,0,,,,2012-10-15 08:00,2012-10-15 16:00,,2012-08-16 08:00,2012-08-16 16:00,2012-08-16 08:00,2012-08-16 16:00,2012-08-16 08:00,2012-08-16 16:00,,2012-10-15 08:00,2012-10-15 16:00,,PT_Normal,,,,,bV/OcrnTc0qkH3HqjmLVVQ,aFb5+Mi1pkmotvcVj4yZGQ,,,N,0,0,,,2012-05-05 12:17,2012-05-16 14:02,admin,admin
970,130420,3769,19920,3746,1,0,N,N,N,CP_Drtn,TT_Task,DT_FixedDUR2,RV_OK,TK_NotStart,H-8-570,Engineer inspection&approval for Slopped P.C,,472,0,8,0,0,0,8,0,0,0,,,,2012-10-14 08:00,2012-10-14 16:00,,2012-08-16 08:00,2012-08-16 16:00,2012-08-16 08:00,2012-08-16 16:00,2012-08-16 08:00,2012-08-16 16:00,,2012-10-14 08:00,2012-10-14 16:00,,PT_Normal,,,,,KlCPQBMixUOSf48na3zx1A,c90whXo4HUqsnmyGeBmGBA,,,N,0,0,,,2012-05-05 12:17,2012-05-16 14:02,admin,admin
971,130421,3769,19960,3746,1,0,N,N,N,CP_Drtn,TT_Task,DT_FixedDUR2,RV_OK,TK_NotStart,H-9-520,Engineer inspection&approval for water proofing,,560,88,8,0,0,0,8,0,0,0,,,,2012-10-06 08:00,2012-10-06 16:00,,2012-07-28 08:00,2012-07-28 16:00,2012-07-28 08:00,2012-07-28 16:00,2012-07-28 08:00,2012-07-28 16:00,,2012-10-06 08:00,2012-10-06 16:00,,PT_Normal,,,,,DOobnigKu06yRKlbXtUv/g,4lt9Wrz7Ukm+MNVphFzIFA,,,N,0,0,,,2012-05-05 12:17,2012-05-16 14:02,admin,admin
972,130422,3769,19960,3746,1,0,N,N,N,CP_Drtn,TT_Task,DT_FixedDUR2,RV_OK,TK_NotStart,H-9-540,Engineer inspection&approval for Heat insulation,,472,0,8,0,0,0,8,0,0,0,,,,2012-10-10 08:00,2012-10-10 16:00,,2012-08-12 08:00,2012-08-12 16:00,2012-08-12 08:00,2012-08-12 16:00,2012-08-12 08:00,2012-08-12 16:00,,2012-10-10 08:00,2012-10-10 16:00,,PT_Normal,,,,,VgubvQ6CL0u+lXodIXfAlQ,03wA+LuUhE6n+IsX7CsvRw,,,N,0,0,,,2012-05-05 12:17,2012-05-16 14:02,admin,admin
973,130423,3769,19960,3746,1,0,N,N,N,CP_Drtn,TT_Task,DT_FixedDUR2,RV_OK,TK_NotStart,H-9-300,Engineer inspection&approval for Footing insulation,,1016,0,8,0,0,0,8,0,0,0,,,,2012-10-01 08:00,2012-10-01 16:00,,2012-05-27 08:00,2012-05-27 16:00,2012-05-27 08:00,2012-05-27 16:00,2012-05-27 08:00,2012-05-27 16:00,,2012-10-01 08:00,2012-10-01 16:00,,PT_Normal,,,,,NZLZ8mlQI0Kyv+9Z9TPDIg,HMfsPltoEU+YCaq14ffVDA,,,N,0,0,,,2012-05-05 12:17,2012-05-16 14:02,admin,admin
974,130424,3769,19960,3746,1,0,N,N,N,CP_Drtn,TT_Task,DT_FixedDUR2,RV_OK,TK_NotStart,H-9-560,Engineer Release Pouring,,480,480,8,0,0,0,8,0,0,0,,,,2012-10-15 08:00,2012-10-15 16:00,,2012-08-16 08:00,2012-08-16 16:00,2012-08-16 08:00,2012-08-16 16:00,2012-08-16 08:00,2012-08-16 16:00,,2012-10-15 08:00,2012-10-15 16:00,,PT_Normal,,,,,lWmhAKqHUUKpJ1uvvNH4fQ,aFb5+Mi1pkmotvcVj4yZGQ,,,N,0,0,,,2012-05-05 12:17,2012-05-16 14:02,admin,admin
975,130425,3769,19960,3746,1,0,N,N,N,CP_Drtn,TT_Task,DT_FixedDUR2,RV_OK,TK_NotStart,H-9-570,Engineer inspection&approval for Slopped P.C,,472,0,8,0,0,0,8,0,0,0,,,,2012-10-14 08:00,2012-10-14 16:00,,2012-08-16 08:00,2012-08-16 16:00,2012-08-16 08:00,2012-08-16 16:00,2012-08-16 08:00,2012-08-16 16:00,,2012-10-14 08:00,2012-10-14 16:00,,PT_Normal,,,,,kdSUG/qbJUGCsXHOkWYrig,c90whXo4HUqsnmyGeBmGBA,,,N,0,0,,,2012-05-05 12:17,2012-05-16 14:02,admin,admin
976,130426,3769,20001,3746,1,0,N,N,N,CP_Drtn,TT_Task,DT_FixedDUR2,RV_OK,TK_NotStart,H-2-50,Engineer inspection & approval formwork,,532,0,8,0,0,0,8,0,0,0,,,,2012-07-25 08:00,2012-07-25 16:00,,2012-05-19 12:00,2012-05-20 12:00,2012-05-19 12:00,2012-05-20 12:00,2012-05-19 12:00,2012-05-20 12:00,,2012-07-25 08:00,2012-07-25 16:00,,PT_Normal,,,,,lWDbenn3E0yAwnZ7Atp3Xg,YXU6tbCTLU+PNEcvCStDmw,,,N,0,0,,,2012-05-05 12:17,2012-05-16 14:02,admin,admin
977,130427,3769,20001,3746,1,0,N,N,N,CP_Drtn,TT_Task,DT_FixedDUR2,RV_OK,TK_NotStart,H-2-70,Engineer inspection & approval steel work,,532,0,8,0,0,0,8,0,0,0,,,,2012-07-28 08:00,2012-07-28 16:00,,2012-05-22 12:00,2012-05-23 12:00,2012-05-22 12:00,2012-05-23 12:00,2012-05-22 12:00,2012-05-23 12:00,,2012-07-28 08:00,2012-07-28 16:00,,PT_Normal,,,,,B77eWgNltUeZha4TQ+VVSQ,GEOvQjmr0kilZH1mx/rMPw,,,N,0,0,,,2012-05-05 12:17,2012-05-16 14:02,admin,admin
978,130428,3769,20001,3746,1,0,N,N,N,CP_Drtn,TT_Task,DT_FixedDUR2,RV_OK,TK_NotStart,H-2-80,Engineer Release Pouring,,532,0,8,0,0,0,8,0,0,0,,,,2012-07-28 08:00,2012-07-28 16:00,,2012-05-22 12:00,2012-05-23 12:00,2012-05-22 12:00,2012-05-23 12:00,2012-05-22 12:00,2012-05-23 12:00,,2012-07-28 08:00,2012-07-28 16:00,,PT_Normal,,,,,8+NiOG75cEuvyWnE6+RZlQ,SSNr8rowWESdbvkxGgE+jw,,,N,0,0,,,2012-05-05 12:17,2012-05-16 14:02,admin,admin
979,130429,3769,20009,3746,1,100,N,N,N,CP_Drtn,TT_Task,DT_FixedDUR2,RV_OK,TK_Complete,H-3-50,Engineer inspection & approval formwork,,,,0,0,0,0,8,0,0,0,,2012-03-31 00:00,2012-03-31 00:00,,,,,,,,2012-05-05 08:00,2012-05-05 16:00,,,,,PT_Normal,,,,,WCt3l9pzhkWnDH7dzrViiQ,YXU6tbCTLU+PNEcvCStDmw,,,N,0,0,,,2012-05-05 12:17,2012-05-16 14:02,admin,admin
980,130430,3769,20009,3746,1,100,N,N,N,CP_Drtn,TT_Task,DT_FixedDUR2,RV_OK,TK_Complete,H-3-70,Engineer inspection & approval steel work,,,,0,0,0,0,8,0,0,0,,2012-03-31 00:00,2012-03-31 00:00,,,,,,,,2012-04-20 08:00,2012-04-20 16:00,,,,,PT_Normal,,,,,cgh6mXzm+E+fBB7MGKEcEg,GEOvQjmr0kilZH1mx/rMPw,,,N,0,0,,,2012-05-05 12:17,2012-05-16 14:02,admin,admin
981,130431,3769,20009,3746,1,100,N,N,N,CP_Drtn,TT_Task,DT_FixedDUR2,RV_OK,TK_Complete,H-3-80,Engineer Release Pouring,,,,0,0,0,0,8,0,0,0,,2012-04-02 00:00,2012-04-02 00:00,,,,,,,,2012-04-20 08:00,2012-04-20 16:00,,,,,PT_Normal,,,,,fb9q1YndF0i5xK18JZF5bA,SSNr8rowWESdbvkxGgE+jw,,,N,0,0,,,2012-05-05 12:17,2012-05-16 14:02,admin,admin
982,130432,3769,19998,3746,1,100,N,N,N,CP_Drtn,TT_Task,DT_FixedDUR2,RV_OK,TK_Complete,H-4-50,Engineer inspection & approval formwork,,,,0,0,0,0,8,0,0,0,,2012-04-03 00:00,2012-04-03 00:00,,,,,,,,2012-05-05 08:00,2012-05-05 16:00,,,,,PT_Normal,,,,,6/teXAEP00aR4R+lCMLhHg,YXU6tbCTLU+PNEcvCStDmw,,,N,0,0,,,2012-05-05 12:17,2012-05-16 14:02,admin,admin
983,130433,3769,19998,3746,1,100,N,N,N,CP_Drtn,TT_Task,DT_FixedDUR2,RV_OK,TK_Complete,H-4-70,Engineer inspection & approval steel work,,,,0,0,0,0,8,0,0,0,,2012-04-07 00:00,2012-04-07 00:00,,,,,,,,2012-05-13 08:00,2012-05-13 16:00,,,,,PT_Normal,,,,,6KdD3lnn3UGDuPdNtRkrTA,GEOvQjmr0kilZH1mx/rMPw,,,N,0,0,,,2012-05-05 12:17,2012-05-16 14:02,admin,admin
984,130434,3769,19998,3746,1,100,N,N,N,CP_Drtn,TT_Task,DT_FixedDUR2,RV_OK,TK_Complete,H-4-80,Engineer Release Pouring,,,,0,0,0,0,8,0,0,0,,2012-04-07 00:00,2012-04-07 00:00,,,,,,,,2012-05-20 08:00,2012-05-20 16:00,,,,,PT_Normal,,,,,v775/6+yqUCDAikAN2covg,SSNr8rowWESdbvkxGgE+jw,,,N,0,0,,,2012-05-05 12:17,2012-05-16 14:02,admin,admin
985,130435,3769,19997,3746,1,100,N,N,N,CP_Drtn,TT_Task,DT_FixedDUR2,RV_OK,TK_Complete,H-5-50,Engineer inspection & approval formwork,,,,0,0,0,0,8,0,0,0,,2012-03-30 00:00,2012-04-30 00:00,,,,,,,,2012-05-05 08:00,2012-05-05 16:00,,,,,PT_Normal,,,,,5s5u4WtdHUOCvdo+C13z1w,YXU6tbCTLU+PNEcvCStDmw,,,N,0,0,,,2012-05-05 12:17,2012-05-16 14:02,admin,admin
986,130436,3769,19997,3746,1,100,N,N,N,CP_Drtn,TT_Task,DT_FixedDUR2,RV_OK,TK_Complete,H-5-70,Engineer inspection & approval steel work,,,,0,0,0,0,8,0,0,0,,2012-04-03 00:00,2012-04-03 00:00,,,,,,,,2012-05-13 08:00,2012-05-13 16:00,,,,,PT_Normal,,,,,l+pO1SSkjU6nO9rj9ug9Ng,GEOvQjmr0kilZH1mx/rMPw,,,N,0,0,,,2012-05-05 12:17,2012-05-16 14:02,admin,admin
987,130437,3769,19997,3746,1,100,N,N,N,CP_Drtn,TT_Task,DT_FixedDUR2,RV_OK,TK_Complete,H-5-80,Engineer Release Pouring,,,,0,0,0,0,8,0,0,0,,2012-04-03 00:00,2012-04-03 00:00,,,,,,,,2012-05-13 08:00,2012-05-13 16:00,,,,,PT_Normal,,,,,fJJlet5UPkiJPmwEoH1k+w,SSNr8rowWESdbvkxGgE+jw,,,N,0,0,,,2012-05-05 12:17,2012-05-16 14:02,admin,admin
988,130438,3769,20036,3746,1,100,N,N,N,CP_Drtn,TT_Task,DT_FixedDUR2,RV_OK,TK_Complete,H-6-50,Engineer inspection & approval formwork,,,,0,0,0,0,8,0,0,0,,2012-04-09 00:00,2012-04-09 00:00,,,,,,,,2012-05-05 08:00,2012-05-05 16:00,,,,,PT_Normal,,,,,5dwd7l47l02waN8uKDq0Gg,YXU6tbCTLU+PNEcvCStDmw,,,N,0,0,,,2012-05-05 12:17,2012-05-16 14:02,admin,admin
989,130439,3769,20036,3746,1,100,N,N,N,CP_Drtn,TT_Task,DT_FixedDUR2,RV_OK,TK_Complete,H-6-70,Engineer inspection & approval steel work,,,,0,0,0,0,8,0,0,0,,2012-04-13 00:00,2012-04-13 00:00,,,,,,,,2012-05-13 08:00,2012-05-13 16:00,,,,,PT_Normal,,,,,NigqEpF0eEKtDlW2yKzpMg,GEOvQjmr0kilZH1mx/rMPw,,,N,0,0,,,2012-05-05 12:17,2012-05-16 14:02,admin,admin
990,130440,3769,20036,3746,1,100,N,N,N,CP_Drtn,TT_Task,DT_FixedDUR2,RV_OK,TK_Complete,H-6-80,Engineer Release Pouring,,,,0,0,0,0,8,0,0,0,,2012-04-13 00:00,2012-04-13 00:00,,,,,,,,2012-05-13 08:00,2012-05-13 16:00,,,,,PT_Normal,,,,,0rRrLM5wl02bq7x7EwcgGQ,SSNr8rowWESdbvkxGgE+jw,,,N,0,0,,,2012-05-05 12:17,2012-05-16 14:02,admin,admin
991,130441,3769,20003,3746,1,0,N,N,N,CP_Drtn,TT_Task,DT_FixedDUR2,RV_OK,TK_NotStart,H-7-50,Engineer inspection & approval formwork,,0,0,8,0,0,0,8,0,0,0,,,,2012-06-11 08:00,2012-06-11 16:00,,2012-06-11 08:00,2012-06-11 16:00,2012-06-11 08:00,2012-06-11 16:00,2012-06-11 08:00,2012-06-11 16:00,,2012-06-11 08:00,2012-06-11 16:00,,PT_Normal,,,,,B/pH2VS0X0KPWxoYWDopmg,YXU6tbCTLU+PNEcvCStDmw,,,Y,0,0,,,2012-05-05 12:17,2012-05-16 14:02,admin,admin
992,130442,3769,20003,3746,1,0,N,N,N,CP_Drtn,TT_Task,DT_FixedDUR2,RV_OK,TK_NotStart,H-7-70,Engineer inspection & approval steel work,,0,0,8,0,0,0,8,0,0,0,,,,2012-06-19 08:00,2012-06-19 16:00,,2012-06-19 08:00,2012-06-19 16:00,2012-06-19 08:00,2012-06-19 16:00,2012-06-19 08:00,2012-06-19 16:00,,2012-06-19 08:00,2012-06-19 16:00,,PT_Normal,,,,,Zjbm+EAxCE+WbPLHMmPQsw,GEOvQjmr0kilZH1mx/rMPw,,,Y,0,0,,,2012-05-05 12:17,2012-05-16 14:02,admin,admin
993,130443,3769,20003,3746,1,0,N,N,N,CP_Drtn,TT_Task,DT_FixedDUR2,RV_OK,TK_NotStart,H-7-80,Engineer Release Pouring,,944,944,8,0,0,0,8,0,0,0,,,,2012-10-15 08:00,2012-10-15 16:00,,2012-06-19 08:00,2012-06-19 16:00,2012-06-19 08:00,2012-06-19 16:00,2012-06-19 08:00,2012-06-19 16:00,,2012-10-15 08:00,2012-10-15 16:00,,PT_Normal,,,,,AnzgtZQkUkOr+Lf+l+iipg,SSNr8rowWESdbvkxGgE+jw,,,N,0,0,,,2012-05-05 12:17,2012-05-16 14:02,admin,admin
994,130444,3769,20011,3746,1,100,N,N,N,CP_Drtn,TT_Task,DT_FixedDUR2,RV_OK,TK_Complete,H-8-50,Engineer inspection & approval formwork,,,,0,0,0,0,8,0,0,0,,2012-04-09 00:00,2012-04-09 00:00,,,,,,,,2012-05-20 08:00,2012-05-20 16:00,,,,,PT_Normal,,,,,VXyRFNEIV06C6pTIvZuukg,YXU6tbCTLU+PNEcvCStDmw,,,N,0,0,,,2012-05-05 12:17,2012-05-16 14:02,admin,admin
995,130445,3769,20011,3746,1,100,N,N,N,CP_Drtn,TT_Task,DT_FixedDUR2,RV_OK,TK_Complete,H-8-70,Engineer inspection & approval steel work,,,,0,0,0,0,8,0,0,0,,2012-04-12 00:00,2012-04-12 00:00,,,,,,,,2012-05-28 08:00,2012-05-28 16:00,,,,,PT_Normal,,,,,FFbnc9JVd0qBuk4IT5vf3g,GEOvQjmr0kilZH1mx/rMPw,,,N,0,0,,,2012-05-05 12:17,2012-05-16 14:02,admin,admin
996,130446,3769,20011,3746,1,100,N,N,N,CP_Drtn,TT_Task,DT_FixedDUR2,RV_OK,TK_Complete,H-8-80,Engineer Release Pouring,,,,0,0,0,0,8,0,0,0,,2012-04-13 00:00,2012-04-13 00:00,,,,,,,,2012-05-28 08:00,2012-05-28 16:00,,,,,PT_Normal,,,,,ZnSjrvb56kinNdO5gdSSGg,SSNr8rowWESdbvkxGgE+jw,,,N,0,0,,,2012-05-05 12:17,2012-05-16 14:02,admin,admin
997,130447,3769,20019,3746,1,100,N,N,N,CP_Drtn,TT_Task,DT_FixedDUR2,RV_OK,TK_Complete,H-9-50,Engineer inspection & approval formwork,,,,0,0,0,0,8,0,0,0,,2012-04-09 00:00,2012-04-09 00:00,,,,,,,,2012-05-20 08:00,2012-05-20 16:00,,,,,PT_Normal,,,,,yD6wxWFKs0C8qnf9Az6bUA,YXU6tbCTLU+PNEcvCStDmw,,,N,0,0,,,2012-05-05 12:17,2012-05-16 14:02,admin,admin
998,130448,3769,20019,3746,1,100,N,N,N,CP_Drtn,TT_Task,DT_FixedDUR2,RV_OK,TK_Complete,H-9-70,Engineer inspection & approval steel work,,,,0,0,0,0,8,0,0,0,,2012-04-12 00:00,2012-04-12 00:00,,,,,,,,2012-05-28 08:00,2012-05-28 16:00,,,,,PT_Normal,,,,,ZRNwL1Cn2kixMAtrK9M0xw,GEOvQjmr0kilZH1mx/rMPw,,,N,0,0,,,2012-05-05 12:17,2012-05-16 14:02,admin,admin
999,130449,3769,20019,3746,1,100,N,N,N,CP_Drtn,TT_Task,DT_FixedDUR2,RV_OK,TK_Complete,H-9-80,Engineer Release Pouring,,,,0,0,0,0,8,0,0,0,,2012-04-13 00:00,2012-04-13 00:00,,,,,,,,2012-05-28 08:00,2012-05-28 16:00,,,,,PT_Normal,,,,,p7f1oZ41UECeLFapw3wi9g,SSNr8rowWESdbvkxGgE+jw,,,N,0,0,,,2012-05-05 12:17,2012-05-16 14:02,admin,admin
1000,130450,3769,19989,3746,1,100,N,N,N,CP_Drtn,TT_Task,DT_FixedDUR2,RV_OK,TK_Complete,H-10-50,Engineer inspection & approval formwork,,,,0,0,0,0,8,0,0,0,,2012-04-11 00:00,2012-04-11 00:00,,,,,,,,2012-05-06 08:00,2012-05-06 16:00,,,,,PT_Normal,,,,,pHp5pqgsW0Wx3UYSoO4aew,YXU6tbCTLU+PNEcvCStDmw,,,N,0,0,,,2012-05-05 12:17,2012-05-16 14:02,admin,admin
1001,130451,3769,19989,3746,1,100,N,N,N,CP_Drtn,TT_Task,DT_FixedDUR2,RV_OK,TK_Complete,H-10-70,Engineer inspection & approval steel work,,,,0,0,0,0,8,0,0,0,,2012-04-15 00:00,2012-04-15 00:00,,,,,,,,2012-05-14 08:00,2012-05-14 16:00,,,,,PT_Normal,,,,,ZZk3xct+SUyPcKSJDF/o8A,GEOvQjmr0kilZH1mx/rMPw,,,N,0,0,,,2012-05-05 12:17,2012-05-16 14:02,admin,admin
1002,130452,3769,19989,3746,1,100,N,N,N,CP_Drtn,TT_Task,DT_FixedDUR2,RV_OK,TK_Complete,H-10-80,Engineer Release Pouring,,,,0,0,0,0,8,0,0,0,,2012-04-15 00:00,2012-04-15 00:00,,,,,,,,2012-05-14 08:00,2012-05-14 16:00,,,,,PT_Normal,,,,,T2+eD62U/0GT5xoIPGJOmw,SSNr8rowWESdbvkxGgE+jw,,,N,0,0,,,2012-05-05 12:17,2012-05-16 14:02,admin,admin
1003,130453,3769,20035,3746,1,100,N,N,N,CP_Drtn,TT_Task,DT_FixedDUR2,RV_OK,TK_Complete,H-11-50,Engineer inspection & approval formwork,,,,0,0,0,0,8,0,0,0,,2012-04-21 00:00,2012-04-21 00:00,,,,,,,,2012-06-22 08:00,2012-06-22 16:00,,,,,PT_Normal,,,,,NO3hpqtvokSIfmqjJgvikg,YXU6tbCTLU+PNEcvCStDmw,,,N,0,0,,,2012-05-05 12:17,2012-05-16 14:02,admin,admin
1004,130454,3769,20035,3746,1,100,N,N,N,CP_Drtn,TT_Task,DT_FixedDUR2,RV_OK,TK_Complete,H-11-70,Engineer inspection & approval steel work,,,,0,0,0,0,8,0,0,0,,2012-04-25 00:00,2012-04-25 00:00,,,,,,,,2012-06-18 08:00,2012-06-18 16:00,,,,,PT_Normal,,,,,jZ8W8iEDsEu2Hf0tKAegjA,GEOvQjmr0kilZH1mx/rMPw,,,N,0,0,,,2012-05-05 12:17,2012-05-16 14:02,admin,admin
1005,130455,3769,20035,3746,1,100,N,N,N,CP_Drtn,TT_Task,DT_FixedDUR2,RV_OK,TK_Complete,H-11-80,Engineer Release Pouring,,,,0,0,0,0,8,0,0,0,,2012-04-28 00:00,2012-04-28 00:00,,,,,,,,2012-06-18 08:00,2012-06-18 16:00,,,,,PT_Normal,,,,,/Ub1r7p7oUiov2raA+ZgGQ,SSNr8rowWESdbvkxGgE+jw,,,N,0,0,,,2012-05-05 12:17,2012-05-16 14:02,admin,admin
1006,130456,3769,20024,3746,1,0,N,N,N,CP_Drtn,TT_Task,DT_FixedDUR2,RV_OK,TK_NotStart,H-12-50,Engineer inspection & approval formwork,,24,0,8,0,0,0,8,0,0,0,,,,2012-06-12 08:00,2012-06-12 16:00,,2012-06-09 08:00,2012-06-09 16:00,2012-06-09 08:00,2012-06-09 16:00,2012-06-09 08:00,2012-06-09 16:00,,2012-06-12 08:00,2012-06-12 16:00,,PT_Normal,,,,,qqNcu5Zoqkq4QrAE0hwryw,YXU6tbCTLU+PNEcvCStDmw,,,N,0,0,,,2012-05-05 12:17,2012-05-16 14:02,admin,admin
1007,130457,3769,20024,3746,1,0,N,N,N,CP_Drtn,TT_Task,DT_FixedDUR2,RV_OK,TK_NotStart,H-12-70,Engineer inspection & approval steel work,,24,0,8,0,0,0,8,0,0,0,,,,2012-06-20 08:00,2012-06-20 16:00,,2012-06-17 08:00,2012-06-17 16:00,2012-06-17 08:00,2012-06-17 16:00,2012-06-17 08:00,2012-06-17 16:00,,2012-06-20 08:00,2012-06-20 16:00,,PT_Normal,,,,,6omtXVC6qkClvkgpizrqCg,GEOvQjmr0kilZH1mx/rMPw,,,N,0,0,,,2012-05-05 12:17,2012-05-16 14:02,admin,admin
1008,130458,3769,20024,3746,1,0,N,N,N,CP_Drtn,TT_Task,DT_FixedDUR2,RV_OK,TK_NotStart,H-12-80,Engineer Release Pouring,,960,960,8,0,0,0,8,0,0,0,,,,2012-10-15 08:00,2012-10-15 16:00,,2012-06-17 08:00,2012-06-17 16:00,2012-06-17 08:00,2012-06-17 16:00,2012-06-17 08:00,2012-06-17 16:00,,2012-10-15 08:00,2012-10-15 16:00,,PT_Normal,,,,,d0GF5fk4dka0L7/dHKq48Q,SSNr8rowWESdbvkxGgE+jw,,,N,0,0,,,2012-05-05 12:17,2012-05-16 14:02,admin,admin
1009,130459,3769,19982,1191,1,100,N,N,N,CP_Drtn,TT_Task,DT_FixedDUR2,RV_OK,TK_Complete,C-1-50,Engineer inspection & approval formwork,,,,0,0,0,0,8,0,0,0,,2012-03-28 00:00,2012-04-28 00:00,,,,,,,,2012-05-12 08:00,2012-05-12 16:00,,,,,PT_Normal,,,,,qVctOu+mgUSfwvmx+0G8dg,YXU6tbCTLU+PNEcvCStDmw,,,N,0,0,,,2012-05-05 12:17,2012-05-16 14:02,admin,admin
1010,130460,3769,19982,1191,1,100,N,N,N,CP_Drtn,TT_Task,DT_FixedDUR2,RV_OK,TK_Complete,C-1-70,Engineer inspection & approval steel work,,,,0,0,0,0,8,0,0,0,,2012-03-31 00:00,2012-03-31 00:00,,,,,,,,2012-05-19 08:00,2012-05-19 16:00,,,,,PT_Normal,,,,,IcM8RLvpJUaGloWiKVrRHQ,GEOvQjmr0kilZH1mx/rMPw,,,N,0,0,,,2012-05-05 12:17,2012-05-16 14:02,admin,admin
1011,130461,3769,19982,1191,1,100,N,N,N,CP_Drtn,TT_Task,DT_FixedDUR2,RV_OK,TK_Complete,C-1-80,Engineer Release Pouring,,,,0,0,0,0,8,0,0,0,,2012-03-30 00:00,2012-03-30 00:00,,,,,,,,2012-04-28 08:00,2012-04-28 16:00,,,,,PT_Normal,,,,,p8BnbS/P0EyLYsbwgDx4+A,SSNr8rowWESdbvkxGgE+jw,,,N,0,0,,,2012-05-05 12:17,2012-05-16 14:02,admin,admin
1012,130462,3769,19932,1191,1,100,N,N,N,CP_Drtn,TT_Task,DT_FixedDUR2,RV_OK,TK_Complete,C-2-50,Engineer inspection & approval formwork,,,,0,0,0,0,8,0,0,0,,2012-03-24 00:00,2012-03-24 00:00,,,,,,,,2012-05-06 08:00,2012-05-06 16:00,,,,,PT_Normal,,,,,bhZwK/Qg20OEcHa5ai2fcg,YXU6tbCTLU+PNEcvCStDmw,,,N,0,0,,,2012-05-05 12:17,2012-05-16 14:02,admin,admin
1013,130463,3769,19932,1191,1,100,N,N,N,CP_Drtn,TT_Task,DT_FixedDUR2,RV_OK,TK_Complete,C-2-70,Engineer inspection & approval steel work,,,,0,0,0,0,8,0,0,0,,2012-03-28 00:00,2012-03-28 00:00,,,,,,,,2012-05-14 08:00,2012-05-14 16:00,,,,,PT_Normal,,,,,YPlSKHUBgESMLQO9MFjv3Q,GEOvQjmr0kilZH1mx/rMPw,,,N,0,0,,,2012-05-05 12:17,2012-05-16 14:02,admin,admin
1014,130464,3769,19932,1191,1,100,N,N,N,CP_Drtn,TT_Task,DT_FixedDUR2,RV_OK,TK_Complete,C-2-80,Engineer Release Pouring,,,,0,0,0,0,8,0,0,0,,2012-03-26 00:00,2012-03-26 00:00,,,,,,,,2012-04-28 08:00,2012-04-28 16:00,,,,,PT_Normal,,,,,GqEGbPjZ1UiSINHieo593g,SSNr8rowWESdbvkxGgE+jw,,,N,0,0,,,2012-05-05 12:17,2012-05-16 14:02,admin,admin
1015,130465,3769,19972,1191,1,100,N,N,N,CP_Drtn,TT_Task,DT_FixedDUR2,RV_OK,TK_Complete,C-3-50,Engineer inspection & approval formwork,,,,0,0,0,0,8,0,0,0,,2012-04-04 00:00,2012-04-04 00:00,,,,,,,,2012-05-06 08:00,2012-05-06 16:00,,,,,PT_Normal,,,,,+WEeh7PLRk+XvEWe+IWcjg,YXU6tbCTLU+PNEcvCStDmw,,,N,0,0,,,2012-05-05 12:17,2012-05-16 14:02,admin,admin
1016,130466,3769,19972,1191,1,100,N,N,N,CP_Drtn,TT_Task,DT_FixedDUR2,RV_OK,TK_Complete,C-3-70,Engineer inspection & approval steel work,,,,0,0,0,0,8,0,0,0,,2012-04-08 00:00,2012-04-08 00:00,,,,,,,,2012-05-14 08:00,2012-05-14 16:00,,,,,PT_Normal,,,,,E2mxUYsadkCRJB9CQ1NzxA,GEOvQjmr0kilZH1mx/rMPw,,,N,0,0,,,2012-05-05 12:17,2012-05-16 14:02,admin,admin
1017,130467,3769,19972,1191,1,100,N,N,N,CP_Drtn,TT_Task,DT_FixedDUR2,RV_OK,TK_Complete,C-3-80,Engineer Release Pouring,,,,0,0,0,0,8,0,0,0,,2012-04-08 00:00,2012-04-08 00:00,,,,,,,,2012-04-28 08:00,2012-04-28 16:00,,,,,PT_Normal,,,,,a1/pt6WYxUGtTGwupMgvnQ,SSNr8rowWESdbvkxGgE+jw,,,N,0,0,,,2012-05-05 12:17,2012-05-16 14:02,admin,admin
1018,130468,3769,19987,1191,1,100,N,N,N,CP_Drtn,TT_Task,DT_FixedDUR2,RV_OK,TK_Complete,C-4-50,Engineer inspection & approval formwork,,,,0,0,0,0,8,0,0,0,,2012-03-24 00:00,2012-03-24 00:00,,,,,,,,2012-05-06 08:00,2012-05-06 16:00,,,,,PT_Normal,,,,,eccXtQ8FsEiM56uXoS/Y1w,YXU6tbCTLU+PNEcvCStDmw,,,N,0,0,,,2012-05-05 12:17,2012-05-16 14:02,admin,admin
1019,130469,3769,19987,1191,1,100,N,N,N,CP_Drtn,TT_Task,DT_FixedDUR2,RV_OK,TK_Complete,C-4-70,Engineer inspection & approval steel work,,,,0,0,0,0,8,0,0,0,,2012-03-28 00:00,2012-03-28 00:00,,,,,,,,2012-05-14 08:00,2012-05-14 16:00,,,,,PT_Normal,,,,,3zAkoS1Gv0qG0WN5fjILLg,GEOvQjmr0kilZH1mx/rMPw,,,N,0,0,,,2012-05-05 12:17,2012-05-16 14:02,admin,admin
1020,130470,3769,19987,1191,1,100,N,N,N,CP_Drtn,TT_Task,DT_FixedDUR2,RV_OK,TK_Complete,C-4-80,Engineer Release Pouring,,,,0,0,0,0,8,0,0,0,,2012-03-22 00:00,2012-03-22 00:00,,,,,,,,2012-04-28 08:00,2012-04-28 16:00,,,,,PT_Normal,,,,,PygiJ88BjEq6qNrTJcI0KA,SSNr8rowWESdbvkxGgE+jw,,,N,0,0,,,2012-05-05 12:17,2012-05-16 14:02,admin,admin
1021,130471,3769,19975,1191,1,100,N,N,N,CP_Drtn,TT_Task,DT_FixedDUR2,RV_OK,TK_Complete,C-5-50,Engineer inspection & approval formwork,,,,0,0,0,0,8,0,0,0,,2012-04-03 00:00,2012-04-03 00:00,,,,,,,,2012-05-06 08:00,2012-05-06 16:00,,,,,PT_Normal,,,,,MTPYYV1350uWHF9csLfmIA,YXU6tbCTLU+PNEcvCStDmw,,,N,0,0,,,2012-05-05 12:17,2012-05-16 14:02,admin,admin
1022,130472,3769,19975,1191,1,100,N,N,N,CP_Drtn,TT_Task,DT_FixedDUR2,RV_OK,TK_Complete,C-5-70,Engineer inspection & approval steel work,,,,0,0,0,0,8,0,0,0,,2012-04-07 00:00,2012-04-07 00:00,,,,,,,,2012-05-14 08:00,2012-05-14 16:00,,,,,PT_Normal,,,,,7wWk+bx86Eabo8Iud0zYVA,GEOvQjmr0kilZH1mx/rMPw,,,N,0,0,,,2012-05-05 12:17,2012-05-16 14:02,admin,admin
1023,130473,3769,19975,1191,1,100,N,N,N,CP_Drtn,TT_Task,DT_FixedDUR2,RV_OK,TK_Complete,C-5-80,Engineer Release Pouring,,,,0,0,0,0,8,0,0,0,,2012-03-27 00:00,2012-03-27 00:00,,,,,,,,2012-04-28 08:00,2012-04-28 16:00,,,,,PT_Normal,,,,,H/WrhyxgN0+Tgiwi8tJQEg,SSNr8rowWESdbvkxGgE+jw,,,N,0,0,,,2012-05-05 12:17,2012-05-16 14:02,admin,admin
1024,130474,3769,19976,3746,1,0,N,N,N,CP_Drtn,TT_Task,DT_FixedDUR2,RV_OK,TK_NotStart,H-1-720,Slopped P.C Pouring,3779,352,352,8,0,7,7,8,0,0,0,,,,2012-10-15 08:00,2012-10-15 16:00,,2012-09-01 08:00,2012-09-01 16:00,2012-09-01 08:00,2012-09-01 16:00,2012-09-01 08:00,2012-09-01 16:00,,2012-10-15 08:00,2012-10-15 16:00,,PT_Normal,,,,,mg+UOhz5qEG8gabKaN9aBQ,,,,N,0,0,,,2012-05-05 12:17,2012-05-16 14:02,admin,admin
1025,130475,3769,19967,3746,1,0,N,N,N,CP_Drtn,TT_Task,DT_FixedDUR2,RV_OK,TK_NotStart,H-2-580,Slopped P.C Pouring,3779,480,480,8,0,12,12,8,0,0,0,,,,2012-10-15 08:00,2012-10-15 16:00,,2012-08-16 08:00,2012-08-16 16:00,2012-08-16 08:00,2012-08-16 16:00,2012-08-16 08:00,2012-08-16 16:00,,2012-10-15 08:00,2012-10-15 16:00,,PT_Normal,,,,,4MopyfoLDE+oOBz2iNd9Ow,yaWavBwBwUmIVmECRiwn1w,,,N,0,0,,,2012-05-05 12:17,2012-05-16 14:02,admin,admin
1026,130476,3769,19988,3746,1,0,N,N,N,CP_Drtn,TT_Task,DT_FixedDUR2,RV_OK,TK_NotStart,H-3-580,Slopped P.C Pouring,3779,472,472,8,0,8,8,8,0,0,0,,,,2012-10-15 08:00,2012-10-15 16:00,,2012-08-17 08:00,2012-08-17 16:00,2012-08-17 08:00,2012-08-17 16:00,2012-08-17 08:00,2012-08-17 16:00,,2012-10-15 08:00,2012-10-15 16:00,,PT_Normal,,,,,gwcHD7YA5UK33GNw7wP/7A,sXVwypD4x0K5wJJPXaOrxg,,,N,0,0,,,2012-05-05 12:17,2012-05-16 14:02,admin,admin
1027,130477,3769,19964,3746,1,0,N,N,N,CP_Drtn,TT_Task,DT_FixedDUR2,RV_OK,TK_NotStart,H-4-580,Slopped P.C Pouring,3779,472,472,8,0,6,6,8,0,0,0,,,,2012-10-15 08:00,2012-10-15 16:00,,2012-08-17 08:00,2012-08-17 16:00,2012-08-17 08:00,2012-08-17 16:00,2012-08-17 08:00,2012-08-17 16:00,,2012-10-15 08:00,2012-10-15 16:00,,PT_Normal,,,,,hC1RQUDz80eTpin/btMqMA,PSr7z3k5ckW1xByVHaTcHQ,,,N,0,0,,,2012-05-05 12:17,2012-05-16 14:02,admin,admin
1028,130478,3769,19985,3746,1,0,N,N,N,CP_Drtn,TT_Task,DT_FixedDUR2,RV_OK,TK_NotStart,H-5-580,Slopped P.C Pouring,3779,472,472,8,0,10,10,8,0,0,0,,,,2012-10-15 08:00,2012-10-15 16:00,,2012-08-17 08:00,2012-08-17 16:00,2012-08-17 08:00,2012-08-17 16:00,2012-08-17 08:00,2012-08-17 16:00,,2012-10-15 08:00,2012-10-15 16:00,,PT_Normal,,,,,Zy3XhZjd3EC/37YQuIY5RA,PSr7z3k5ckW1xByVHaTcHQ,,,N,0,0,,,2012-05-05 12:17,2012-05-16 14:02,admin,admin
1029,130479,3769,19958,3746,1,0,N,N,N,CP_Drtn,TT_Task,DT_FixedDUR2,RV_OK,TK_NotStart,H-6-580,Slopped P.C Pouring,3780,472,472,8,0,6,6,8,0,0,0,,,,2012-10-15 08:00,2012-10-15 16:00,,2012-08-17 08:00,2012-08-17 16:00,2012-08-17 08:00,2012-08-17 16:00,2012-08-17 08:00,2012-08-17 16:00,,2012-10-15 08:00,2012-10-15 16:00,,PT_Normal,,,,,ToSbPBnB1EGHuVjO04uPgQ,PSr7z3k5ckW1xByVHaTcHQ,,,N,0,0,,,2012-05-05 12:17,2012-05-16 14:02,admin,admin
1030,130480,3769,19928,3746,1,0,N,N,N,CP_Drtn,TT_Task,DT_FixedDUR2,RV_OK,TK_NotStart,H-7-580,Slopped P.C Pouring,3779,0,0,8,0,8,8,8,0,0,0,,,,2012-10-15 08:00,2012-10-15 16:00,,2012-10-15 08:00,2012-10-15 16:00,2012-10-15 08:00,2012-10-15 16:00,2012-10-15 08:00,2012-10-15 16:00,,2012-10-15 08:00,2012-10-15 16:00,,PT_Normal,,,,,HCHk1gaty0CX/5Tq+PgTIQ,PSr7z3k5ckW1xByVHaTcHQ,,,Y,0,0,,,2012-05-05 12:17,2012-05-16 14:02,admin,admin
1031,130481,3769,19920,3746,1,0,N,N,N,CP_Drtn,TT_Task,DT_FixedDUR2,RV_OK,TK_NotStart,H-8-580,Slopped P.C Pouring,3780,472,472,8,0,7,7,8,0,0,0,,,,2012-10-15 08:00,2012-10-15 16:00,,2012-08-17 08:00,2012-08-17 16:00,2012-08-17 08:00,2012-08-17 16:00,2012-08-17 08:00,2012-08-17 16:00,,2012-10-15 08:00,2012-10-15 16:00,,PT_Normal,,,,,vtgTnqQnPkmD49QAIn9qaA,PSr7z3k5ckW1xByVHaTcHQ,,,N,0,0,,,2012-05-05 12:17,2012-05-16 14:02,admin,admin
1032,130482,3769,19960,3746,1,0,N,N,N,CP_Drtn,TT_Task,DT_FixedDUR2,RV_OK,TK_NotStart,H-9-580,Slopped P.C Pouring,3779,472,472,8,0,13,13,8,0,0,0,,,,2012-10-15 08:00,2012-10-15 16:00,,2012-08-17 08:00,2012-08-17 16:00,2012-08-17 08:00,2012-08-17 16:00,2012-08-17 08:00,2012-08-17 16:00,,2012-10-15 08:00,2012-10-15 16:00,,PT_Normal,,,,,PmVYHVIBV06VBGvAnPMzVw,PSr7z3k5ckW1xByVHaTcHQ,,,N,0,0,,,2012-05-05 12:17,2012-05-16 14:02,admin,admin
1033,130483,3769,19951,3746,1,0,N,N,N,CP_Drtn,TT_Task,DT_FixedDUR2,RV_OK,TK_NotStart,H-10-580,Slopped P.C Pouring,3779,472,472,8,0,14,14,8,0,0,0,,,,2012-10-15 08:00,2012-10-15 16:00,,2012-08-17 08:00,2012-08-17 16:00,2012-08-17 08:00,2012-08-17 16:00,2012-08-17 08:00,2012-08-17 16:00,,2012-10-15 08:00,2012-10-15 16:00,,PT_Normal,,,,,wgDWL6Jt1EWhZCA1ACudJQ,PSr7z3k5ckW1xByVHaTcHQ,,,N,0,0,,,2012-05-05 12:17,2012-05-16 14:02,admin,admin
1034,130484,3769,19938,3746,1,0,N,N,N,CP_Drtn,TT_Task,DT_FixedDUR2,RV_OK,TK_NotStart,H-11-580,Slopped P.C Pouring,3779,480,480,8,0,7,7,8,0,0,0,,,,2012-10-15 08:00,2012-10-15 16:00,,2012-08-16 08:00,2012-08-16 16:00,2012-08-16 08:00,2012-08-16 16:00,2012-08-16 08:00,2012-08-16 16:00,,2012-10-15 08:00,2012-10-15 16:00,,PT_Normal,,,,,wNLqmVNi/0O6Mvy6A29d4g,PSr7z3k5ckW1xByVHaTcHQ,,,N,0,0,,,2012-05-05 12:17,2012-05-16 14:02,admin,admin
1035,130485,3769,19949,3746,1,0,N,N,N,CP_Drtn,TT_Task,DT_FixedDUR2,RV_OK,TK_NotStart,H-12-720,Slopped P.C Pouring,,24,24,8,0,0,0,8,0,0,0,,,,2012-10-15 08:00,2012-10-15 16:00,,2012-10-12 08:00,2012-10-12 16:00,2012-10-12 08:00,2012-10-12 16:00,2012-10-12 08:00,2012-10-12 16:00,,2012-10-15 08:00,2012-10-15 16:00,,PT_Normal,,,,,X21vap9wAEe3z/qL3F62kA,PSr7z3k5ckW1xByVHaTcHQ,,,N,0,0,,,2012-05-05 12:17,2012-05-16 14:02,admin,admin
1036,130486,3769,19944,1191,1,0,N,N,N,CP_Drtn,TT_Task,DT_FixedDUR2,RV_OK,TK_NotStart,C-1-310,Slopped P.C Pouring,3779,424,424,8,0,2,2,8,0,0,0,,,,2012-10-15 08:00,2012-10-15 16:00,,2012-08-14 08:00,2012-08-14 16:00,2012-08-14 08:00,2012-08-14 16:00,2012-08-14 08:00,2012-08-14 16:00,,2012-10-15 08:00,2012-10-15 16:00,,PT_Normal,,,,,vz6O4YRho0an3jpqqEn/Cw,PSr7z3k5ckW1xByVHaTcHQ,,,N,0,0,,,2012-05-05 12:17,2012-05-16 14:02,admin,admin
1037,130487,3769,19983,1191,1,0,N,N,N,CP_Drtn,TT_Task,DT_FixedDUR2,RV_OK,TK_NotStart,C-2-310,Slopped P.C Pouring,3779,424,424,8,0,3,3,8,0,0,0,,,,2012-10-15 08:00,2012-10-15 16:00,,2012-08-14 08:00,2012-08-14 16:00,2012-08-14 08:00,2012-08-14 16:00,2012-08-14 08:00,2012-08-14 16:00,,2012-10-15 08:00,2012-10-15 16:00,,PT_Normal,,,,,46hZFjHcWEaLdtK2gE6fPg,PSr7z3k5ckW1xByVHaTcHQ,,,N,0,0,,,2012-05-05 12:17,2012-05-16 14:02,admin,admin
1038,130488,3769,19933,1191,1,0,N,N,N,CP_Drtn,TT_Task,DT_FixedDUR2,RV_OK,TK_NotStart,C-3-310,Slopped P.C Pouring,3779,424,424,8,0,2,2,8,0,0,0,,,,2012-10-15 08:00,2012-10-15 16:00,,2012-08-14 08:00,2012-08-14 16:00,2012-08-14 08:00,2012-08-14 16:00,2012-08-14 08:00,2012-08-14 16:00,,2012-10-15 08:00,2012-10-15 16:00,,PT_Normal,,,,,Si4fLHjtH06eNwbroXB6dQ,PSr7z3k5ckW1xByVHaTcHQ,,,N,0,0,,,2012-05-05 12:17,2012-05-16 14:02,admin,admin
1039,130489,3769,19984,1191,1,0,N,N,N,CP_Drtn,TT_Task,DT_FixedDUR2,RV_OK,TK_NotStart,C-4-310,Slopped P.C Pouring,3779,424,424,8,0,2,2,8,0,0,0,,,,2012-10-15 08:00,2012-10-15 16:00,,2012-08-14 08:00,2012-08-14 16:00,2012-08-14 08:00,2012-08-14 16:00,2012-08-14 08:00,2012-08-14 16:00,,2012-10-15 08:00,2012-10-15 16:00,,PT_Normal,,,,,WV2YyPk9Kke9vcA1AMthcg,PSr7z3k5ckW1xByVHaTcHQ,,,N,0,0,,,2012-05-05 12:17,2012-05-16 14:02,admin,admin
1040,130490,3769,19941,1191,1,0,N,N,N,CP_Drtn,TT_Task,DT_FixedDUR2,RV_OK,TK_NotStart,C-5-310,Slopped P.C Pouring,3779,424,424,8,0,3,3,8,0,0,0,,,,2012-10-15 08:00,2012-10-15 16:00,,2012-08-14 08:00,2012-08-14 16:00,2012-08-14 08:00,2012-08-14 16:00,2012-08-14 08:00,2012-08-14 16:00,,2012-10-15 08:00,2012-10-15 16:00,,PT_Normal,,,,,JggoQPBf3029CAM4TwnWGA,PSr7z3k5ckW1xByVHaTcHQ,,,N,0,0,,,2012-05-05 12:17,2012-05-16 14:02,admin,admin
1041,130491,3769,20033,3746,1,0,N,N,N,CP_Drtn,TT_Task,DT_FixedDUR2,RV_OK,TK_NotStart,H-12-100,Columns form works,,24,0,32,0,0,0,32,0,0,0,,,,2012-06-22 08:00,2012-06-25 16:00,,2012-06-19 08:00,2012-06-22 16:00,2012-06-19 08:00,2012-06-22 16:00,2012-06-19 08:00,2012-06-22 16:00,,2012-06-22 08:00,2012-06-25 16:00,,PT_Normal,,,,,R3Ild6Rt4UqxNECXfi0L/g,Fu6tSG5ThUqOHw3LB/FYPw,,,N,0,0,,,2012-05-05 12:17,2012-05-16 14:02,admin,admin
1042,130492,3769,20033,3746,1,0,N,N,N,CP_Drtn,TT_Task,DT_FixedDUR2,RV_OK,TK_NotStart,H-12-160,Slab form works,,24,0,80,0,0,0,80,0,0,0,,,,2012-07-02 08:00,2012-07-11 16:00,,2012-06-29 08:00,2012-07-08 16:00,2012-06-29 08:00,2012-07-08 16:00,2012-06-29 08:00,2012-07-08 16:00,,2012-07-02 08:00,2012-07-11 16:00,,PT_Normal,,,,,o7sdd+MNpE2JXBQkV9KvPA,hd5Il7+1rE642jofsaigJg,,,N,0,0,,,2012-05-05 12:17,2012-05-16 14:02,admin,admin
1043,130493,3769,20033,3746,1,0,N,N,N,CP_Drtn,TT_Task,DT_FixedDUR2,RV_OK,TK_NotStart,H-12-150,Columns&Walls Pouring works,,24,0,8,0,0,0,8,0,0,0,,,,2012-07-01 08:00,2012-07-01 16:00,,2012-06-28 08:00,2012-06-28 16:00,2012-06-28 08:00,2012-06-28 16:00,2012-06-28 08:00,2012-06-28 16:00,,2012-07-01 08:00,2012-07-01 16:00,,PT_Normal,,,,,PkzroTN0lkayoEACUWcm2g,vHYLLheAIUypLuBUBXS0+g,,,N,0,0,,,2012-05-05 12:17,2012-05-16 14:02,admin,admin
1044,130494,3769,20033,3746,1,0,N,N,N,CP_Drtn,TT_Task,DT_FixedDUR2,RV_OK,TK_NotStart,H-12-120,Columns&Walls Steel works,,24,0,24,0,0,0,24,0,0,0,,,,2012-06-27 08:00,2012-06-29 16:00,,2012-06-24 08:00,2012-06-26 16:00,2012-06-24 08:00,2012-06-26 16:00,2012-06-24 08:00,2012-06-26 16:00,,2012-06-27 08:00,2012-06-29 16:00,,PT_Normal,,,,,Ov/J0Gg/20WhzxEFxQxqcg,bnrAxwC40UiguLCdDs83Zg,,,N,0,0,,,2012-05-05 12:17,2012-05-16 14:02,admin,admin
1045,130495,3769,20033,3746,1,0,N,N,N,CP_Drtn,TT_Task,DT_FixedDUR2,RV_OK,TK_NotStart,H-12-200,Slab steel works,,24,0,32,0,0,0,32,0,0,0,,,,2012-07-13 08:00,2012-07-16 16:00,,2012-07-10 08:00,2012-07-13 16:00,2012-07-10 08:00,2012-07-13 16:00,2012-07-10 08:00,2012-07-13 16:00,,2012-07-13 08:00,2012-07-16 16:00,,PT_Normal,,,,,xSnYkbdxv0eWpVBgh16J3A,uHjG7zNF6kKHnPtTyZOmnw,,,N,0,0,,,2012-05-05 12:17,2012-05-16 14:02,admin,admin
1046,130496,3769,20033,3746,1,0,N,N,N,CP_Drtn,TT_Task,DT_FixedDUR2,RV_OK,TK_NotStart,H-12-230,Slab Pouring works,,24,0,8,0,0,0,8,0,0,0,,,,2012-07-18 08:00,2012-07-18 16:00,,2012-07-15 08:00,2012-07-15 16:00,2012-07-15 08:00,2012-07-15 16:00,2012-07-15 08:00,2012-07-15 16:00,,2012-07-18 08:00,2012-07-18 16:00,,PT_Normal,,,,,1zJjs+7Eh0Onc8G9YgshWA,wD96RnfxbkiSSL4/5KhCIQ,,,N,0,0,,,2012-05-05 12:17,2012-05-16 14:02,admin,admin
1047,130497,3769,20033,3746,1,0,N,N,N,CP_Drtn,TT_Task,DT_FixedDUR2,RV_OK,TK_NotStart,H-12-110,ColColumns&walls form works inspection,,24,0,8,0,0,0,8,0,0,0,,,,2012-06-26 08:00,2012-06-26 16:00,,2012-06-23 08:00,2012-06-23 16:00,2012-06-23 08:00,2012-06-23 16:00,2012-06-23 08:00,2012-06-23 16:00,,2012-06-26 08:00,2012-06-26 16:00,,PT_Normal,,,,,ts5jmU31jkCyUmhVg68NSg,1dqBNaSiY0KVXfWwGVlGZA,,,N,0,0,,,2012-05-05 12:17,2012-05-16 14:02,admin,admin
1048,130498,3769,20033,3746,1,0,N,N,N,CP_Drtn,TT_Task,DT_FixedDUR2,RV_OK,TK_NotStart,H-12-130,Columns&walls steel works inspection,,24,0,8,0,0,0,8,0,0,0,,,,2012-06-30 08:00,2012-06-30 16:00,,2012-06-27 08:00,2012-06-27 16:00,2012-06-27 08:00,2012-06-27 16:00,2012-06-27 08:00,2012-06-27 16:00,,2012-06-30 08:00,2012-06-30 16:00,,PT_Normal,,,,,EJe1b5DzJUOeg4jUWsgdTw,3VzbeuzAUkC5wnlVSUUxDw,,,N,0,0,,,2012-05-05 12:17,2012-05-16 14:02,admin,admin
1049,130499,3769,20033,3746,1,0,N,N,N,CP_Drtn,TT_Task,DT_FixedDUR2,RV_OK,TK_NotStart,H-12-140,Engineer Release Pouring,,880,880,8,0,0,0,8,0,0,0,,,,2012-10-15 08:00,2012-10-15 16:00,,2012-06-27 08:00,2012-06-27 16:00,2012-06-27 08:00,2012-06-27 16:00,2012-06-27 08:00,2012-06-27 16:00,,2012-10-15 08:00,2012-10-15 16:00,,PT_Normal,,,,,rQnB++Lmk02Oevcqbfy43g,I/5h7NKLuE2Bunye0SoABg,,,N,0,0,,,2012-05-05 12:17,2012-05-16 14:02,admin,admin
1050,130500,3769,20033,3746,1,0,N,N,N,CP_Drtn,TT_Task,DT_FixedDUR2,RV_OK,TK_NotStart,H-12-210,Engineer Release Pouring,,744,744,8,0,0,0,8,0,0,0,,,,2012-10-15 08:00,2012-10-15 16:00,,2012-07-14 08:00,2012-07-14 16:00,2012-07-14 08:00,2012-07-14 16:00,2012-07-14 08:00,2012-07-14 16:00,,2012-10-15 08:00,2012-10-15 16:00,,PT_Normal,,,,,r4CUTEBuu0Kaq/QDE+tSIg,v1udjNZ/vEu23jzt7dBNBg,,,N,0,0,,,2012-05-05 12:17,2012-05-16 14:02,admin,admin
1051,130501,3769,20033,3746,1,0,N,N,N,CP_Drtn,TT_Task,DT_FixedDUR2,RV_OK,TK_NotStart,H-12-190,Slab form works inspection,,24,0,8,0,0,0,8,0,0,0,,,,2012-07-12 08:00,2012-07-12 16:00,,2012-07-09 08:00,2012-07-09 16:00,2012-07-09 08:00,2012-07-09 16:00,2012-07-09 08:00,2012-07-09 16:00,,2012-07-12 08:00,2012-07-12 16:00,,PT_Normal,,,,,HIX/iGc2bkGH5BlLI0s+Fg,77fdcnRLSE6ZX5+74DuwoQ,,,N,0,0,,,2012-05-05 12:17,2012-05-16 14:02,admin,admin
1052,130502,3769,20033,3746,1,0,N,N,N,CP_Drtn,TT_Task,DT_FixedDUR2,RV_OK,TK_NotStart,H-12-220,Slab steel works inspection,,24,0,8,0,0,0,8,0,0,0,,,,2012-07-17 08:00,2012-07-17 16:00,,2012-07-14 08:00,2012-07-14 16:00,2012-07-14 08:00,2012-07-14 16:00,2012-07-14 08:00,2012-07-14 16:00,,2012-07-17 08:00,2012-07-17 16:00,,PT_Normal,,,,,q5HVXOSTMECRMkVV2BfdIQ,6AvjGvQy9UeyUMLUkTcJYw,,,N,0,0,,,2012-05-05 12:17,2012-05-16 14:02,admin,admin
1053,130503,3769,20034,3746,1,0,N,N,N,CP_Drtn,TT_Task,DT_FixedDUR2,RV_OK,TK_Active,H-1-100,Columns & Walls form works,3777,1216,0,0,39,0,39,40,0,0,0,,2012-04-28 00:00,,2012-10-14 16:00,2012-10-14 16:00,,2012-05-16 08:00,2012-05-16 08:00,2012-05-16 08:00,2012-05-16 08:00,2012-05-07 12:00,2012-05-12 12:00,,2012-10-14 16:00,2012-10-14 16:00,,PT_Normal,,,,,3U0ZDCIlqEaRcZAQE+9yfQ,izImlkPSXE28nMJ6LzLthQ,,,N,39,0,,,2012-05-05 12:17,2012-05-16 14:02,admin,admin
1054,130504,3769,20034,3746,1,0,N,N,N,CP_Drtn,TT_Task,DT_FixedDUR2,RV_OK,TK_Active,H-1-160,Slab form works,3777,1216,0,0,100,0,100,80,0,0,0,,2012-05-05 00:00,,2012-10-14 16:00,2012-10-14 16:00,,2012-05-16 08:00,2012-05-16 08:00,2012-05-16 08:00,2012-05-16 08:00,2012-05-28 08:00,2012-06-06 16:00,,2012-10-14 16:00,2012-10-14 16:00,,PT_Normal,,,,,eVXiMkVKHkKJbyN2guku0w,hsPqrKgcRkuTFL8kO6uzQQ,,,N,100,0,,,2012-05-05 12:17,2012-05-16 14:02,admin,admin
1055,130505,3769,20034,3746,1,0,N,N,N,CP_Drtn,TT_Task,DT_FixedDUR2,RV_OK,TK_Active,H-1-150,Columns&Walls Pouring works,3779,1174.4,0,1.6,5.6,1.4,7,8,0,0,0,,2012-05-09 00:00,,2012-10-09 14:24,2012-10-09 16:00,,2012-05-16 08:00,2012-05-16 09:36,2012-05-16 08:00,2012-05-16 09:36,2012-05-27 08:00,2012-05-27 16:00,,2012-10-09 14:24,2012-10-09 16:00,,PT_Normal,,,,,6c89fafSiEecARFfzqb7Lw,S0gb5+BhVE6iPyv19aDRQA,,,N,5.6,0,,,2012-05-05 12:17,2012-05-16 14:02,admin,admin
1056,130506,3769,20034,3746,1,0,N,N,N,CP_Drtn,TT_Task,DT_FixedDUR2,RV_OK,TK_Active,H-1-120,Columns&Walls Steel works,3778,1213.6,0,2.4,34.2,3.8,38,24,0,0,0,,2012-05-01 00:00,,2012-10-14 13:36,2012-10-14 16:00,,2012-05-16 08:00,2012-05-16 10:24,2012-05-16 08:00,2012-05-16 10:24,2012-05-13 12:00,2012-05-16 12:00,,2012-10-14 13:36,2012-10-14 16:00,,PT_Normal,,,,,v+Qe6ExIn0CPG/sOcJPLWg,HJR7wYX9U0im64rGCMYy7Q,,,N,34.2,0,,,2012-05-05 12:17,2012-05-16 14:02,admin,admin
1057,130507,3769,20034,3746,1,0,N,N,N,CP_Drtn,TT_Task,DT_FixedDUR2,RV_OK,TK_Active,H-1-200,Slab steel works,3778,387.2,0,12.8,57.6,38.4,96,32,0,0,0,,2012-05-10 00:00,,2012-07-03 11:12,2012-07-04 16:00,,2012-05-16 08:00,2012-05-17 12:48,2012-05-16 08:00,2012-05-17 12:48,2012-06-08 08:00,2012-06-11 16:00,,2012-07-03 11:12,2012-07-04 16:00,,PT_Normal,,,,,EqX8ELhcWkCXJigBvttJmA,6BHEG+D0B02ax0orAk0z4w,,,N,57.6,0,,,2012-05-05 12:17,2012-05-16 14:02,admin,admin
1058,130508,3769,20034,3746,1,0,N,N,N,CP_Drtn,TT_Task,DT_FixedDUR2,RV_OK,TK_NotStart,H-1-230,Slab Pouring works,3779,387.2,35.2,8,0,10,10,8,0,0,0,,,,2012-07-06 08:00,2012-07-06 16:00,,2012-05-18 12:48,2012-05-19 12:48,2012-05-18 12:48,2012-05-19 12:48,2012-05-18 12:48,2012-05-19 12:48,,2012-07-06 08:00,2012-07-06 16:00,,PT_Normal,,,,,QCnWjgHZXkStPfScFpF8Og,7eomRfL6W0u5OUXQurjDsA,,,N,0,0,,,2012-05-05 12:17,2012-05-16 14:02,admin,admin
1059,130509,3769,20034,3746,1,0,N,N,N,CP_Drtn,TT_Task,DT_FixedDUR2,RV_OK,TK_NotStart,H-1-110,ColColumns&walls form works inspection,,1216,1216,8,0,0,0,8,0,0,0,,,,2012-10-15 08:00,2012-10-15 16:00,,2012-05-16 08:00,2012-05-16 16:00,2012-05-16 08:00,2012-05-16 16:00,2012-05-16 08:00,2012-05-16 16:00,,2012-10-15 08:00,2012-10-15 16:00,,PT_Normal,,,,,x/5VY6RtKUuRkI7IEFcVIQ,UDDnk5pqLEqlVQQzHLBCsw,,,N,0,0,,,2012-05-05 12:17,2012-05-16 14:02,admin,admin
1060,130510,3769,20034,3746,1,0,N,N,N,CP_Drtn,TT_Task,DT_FixedDUR2,RV_OK,TK_NotStart,H-1-130,Columns&walls steel works inspection,,1213.6,0,8,0,0,0,8,0,0,0,,,,2012-10-15 08:00,2012-10-15 16:00,,2012-05-16 10:24,2012-05-17 10:24,2012-05-16 10:24,2012-05-17 10:24,2012-05-16 10:24,2012-05-17 10:24,,2012-10-15 08:00,2012-10-15 16:00,,PT_Normal,,,,,KG9M0uvItUKaOUmFISA3BQ,EF+h3YS060mvxRDXCK5Ccg,,,N,0,0,,,2012-05-05 12:17,2012-05-16 14:02,admin,admin
1061,130511,3769,20034,3746,1,0,N,N,N,CP_Drtn,TT_Task,DT_FixedDUR2,RV_OK,TK_NotStart,H-1-140,Engineer Release Pouring,,1213.6,1213.6,8,0,0,0,8,0,0,0,,,,2012-10-15 08:00,2012-10-15 16:00,,2012-05-16 10:24,2012-05-17 10:24,2012-05-16 10:24,2012-05-17 10:24,2012-05-16 10:24,2012-05-17 10:24,,2012-10-15 08:00,2012-10-15 16:00,,PT_Normal,,,,,PFTpIzZ72EGRZ70EFmErvg,WQsEfz8LRUaCRMwjCdXm0A,,,N,0,0,,,2012-05-05 12:17,2012-05-16 14:02,admin,admin
1062,130512,3769,20034,3746,1,0,N,N,N,CP_Drtn,TT_Task,DT_FixedDUR2,RV_OK,TK_NotStart,H-1-190,Slab form works inspection,,1216,1216,8,0,0,0,8,0,0,0,,,,2012-10-15 08:00,2012-10-15 16:00,,2012-05-16 08:00,2012-05-16 16:00,2012-05-16 08:00,2012-05-16 16:00,2012-05-16 08:00,2012-05-16 16:00,,2012-10-15 08:00,2012-10-15 16:00,,PT_Normal,,,,,89vvxfR+lU+9yysKMx+JCA,dDGgiZUL2k26Tgmg8kTBsQ,,,N,0,0,,,2012-05-05 12:17,2012-05-16 14:02,admin,admin
1063,130513,3769,20034,3746,1,0,N,N,N,CP_Drtn,TT_Task,DT_FixedDUR2,RV_OK,TK_NotStart,H-1-210,Slab steel works inspection,,387.2,0,8,0,0,0,8,0,0,0,,,,2012-07-05 08:00,2012-07-05 16:00,,2012-05-17 12:48,2012-05-18 12:48,2012-05-17 12:48,2012-05-18 12:48,2012-05-17 12:48,2012-05-18 12:48,,2012-07-05 08:00,2012-07-05 16:00,,PT_Normal,,,,,4E8cZd491keKrkKEUqcJlQ,jhoEa2Q1G0GVVrzUdcVFFQ,,,N,0,0,,,2012-05-05 12:17,2012-05-16 14:02,admin,admin
1064,130514,3769,20034,3746,1,0,N,N,N,CP_Drtn,TT_Task,DT_FixedDUR2,RV_OK,TK_NotStart,H-1-220,Engineer Release Pouring,,387.2,0,8,0,0,0,8,0,0,0,,,,2012-07-05 08:00,2012-07-05 16:00,,2012-05-17 12:48,2012-05-18 12:48,2012-05-17 12:48,2012-05-18 12:48,2012-05-17 12:48,2012-05-18 12:48,,2012-07-05 08:00,2012-07-05 16:00,,PT_Normal,,,,,JpaTdszIDkamQyHpUQseDw,+6ZpZR2P4E2v+gTypovAgg,,,N,0,0,,,2012-05-05 12:17,2012-05-16 14:02,admin,admin
1065,130515,3769,19976,3746,1,0,N,N,N,CP_Drtn,TT_Task,DT_FixedDUR2,RV_OK,TK_NotStart,H-1-170,Water proofing membrane For Basement Walls,,1174.4,0,40,0,0,0,40,0,0,0,,,,2012-10-10 08:00,2012-10-14 16:00,,2012-05-16 09:36,2012-05-21 09:36,2012-05-16 09:36,2012-05-21 09:36,2012-05-16 09:36,2012-05-21 09:36,,2012-10-10 08:00,2012-10-14 16:00,,PT_Normal,,,,,0DXEqp4ay0GbsOMqoj4g/w,iyOOt+/aH0i8bBjSPlRF3w,,,N,0,0,,,2012-05-05 12:17,2012-05-16 14:02,admin,admin
1066,130516,3769,19976,3746,1,0,N,N,N,CP_Drtn,TT_Task,DT_FixedDUR2,RV_OK,TK_NotStart,H-1-180,Engineer inspection&approval for water proofing For Basement Walls,,1174.4,1174.4,8,0,0,0,8,0,0,0,,,,2012-10-15 08:00,2012-10-15 16:00,,2012-05-21 09:36,2012-05-22 09:36,2012-05-21 09:36,2012-05-22 09:36,2012-05-21 09:36,2012-05-22 09:36,,2012-10-15 08:00,2012-10-15 16:00,,PT_Normal,,,,,LD+JwsgkfEOjwyJBOictOg,KsDwq6CtrUOmfF/XMfrN4A,,,N,0,0,,,2012-05-05 12:17,2012-05-16 14:02,admin,admin
1067,130517,3769,19949,3746,1,0,N,N,N,CP_Drtn,TT_Task,DT_FixedDUR2,RV_OK,TK_NotStart,H-12-170,Water proofing membrane For basement Walls,,840,0,24,0,0,0,24,0,0,0,,,,2012-10-12 08:00,2012-10-14 16:00,,2012-06-29 08:00,2012-07-01 16:00,2012-06-29 08:00,2012-07-01 16:00,2012-06-29 08:00,2012-07-01 16:00,,2012-10-12 08:00,2012-10-14 16:00,,PT_Normal,,,,,DFEES86/AE2sUD6/EsNnjA,S3598qF/SkeGEvM5KCU0Ew,,,N,0,0,,,2012-05-05 12:17,2012-05-16 14:02,admin,admin
1068,130518,3769,19949,3746,1,0,N,N,N,CP_Drtn,TT_Task,DT_FixedDUR2,RV_OK,TK_NotStart,H-12-180,Engineer inspection&approval for water proofing For basement Walls,,840,840,8,0,0,0,8,0,0,0,,,,2012-10-15 08:00,2012-10-15 16:00,,2012-07-02 08:00,2012-07-02 16:00,2012-07-02 08:00,2012-07-02 16:00,2012-07-02 08:00,2012-07-02 16:00,,2012-10-15 08:00,2012-10-15 16:00,,PT_Normal,,,,,eI0DtQO9d0WPfkCZTs5yLw,8Abm6+CpdkeAsnVuojIM8g,,,N,0,0,,,2012-05-05 12:17,2012-05-16 14:02,admin,admin
1069,130519,3769,19894,1191,1,0,N,N,N,CP_Drtn,TT_Task,DT_FixedDUR2,RV_OK,TK_NotStart,MT-S-1,Concrete design mix submitttal,,1040,1040,8,0,0,0,8,0,0,0,,,,2012-10-15 08:00,2012-10-15 16:00,,2012-05-16 08:00,2012-05-16 16:00,2012-05-16 08:00,2012-05-16 16:00,2012-05-16 08:00,2012-05-16 16:00,,2012-10-15 08:00,2012-10-15 16:00,,PT_Normal,,,,,2C2QayZyiE+g8Kxm8hTtDQ,,,,N,0,0,,,2012-05-05 12:17,2012-05-16 14:02,admin,admin
1070,130520,3769,19894,1191,1,0,N,N,N,CP_Drtn,TT_Task,DT_FixedDUR2,RV_OK,TK_NotStart,MT-S-11,Steel Rft. submittal,,1032,0,8,0,0,0,8,0,0,0,,,,2012-10-14 08:00,2012-10-14 16:00,,2012-05-16 08:00,2012-05-16 16:00,2012-05-16 08:00,2012-05-16 16:00,2012-05-16 08:00,2012-05-16 16:00,,2012-10-14 08:00,2012-10-14 16:00,,PT_Normal,,,,,cAFeAOo2NkyIU9ni7WYDCw,,,,N,0,0,,,2012-05-05 12:17,2012-05-16 14:02,admin,admin
1071,130521,3769,19894,1191,1,0,N,N,N,CP_Drtn,TT_Task,DT_FixedDUR2,RV_OK,TK_NotStart,MT-S-21,Bituminous paints submittals,,920,0,8,0,0,0,8,0,0,0,,,,2012-09-27 08:00,2012-09-27 16:00,,2012-05-16 08:00,2012-05-16 16:00,2012-05-16 08:00,2012-05-16 16:00,2012-05-16 08:00,2012-05-16 16:00,,2012-09-27 08:00,2012-09-27 16:00,,PT_Normal,,,,,64y0QbT2JEKRwZ4oV8uwvA,,,,N,0,0,,,2012-05-05 12:17,2012-05-16 14:02,admin,admin
1072,130522,3769,19894,1191,1,0,N,N,N,CP_Drtn,TT_Task,DT_FixedDUR2,RV_OK,TK_NotStart,MT-S-31,Proofing memmbrane submittal,,1032,0,8,0,0,0,8,0,0,0,,,,2012-10-14 08:00,2012-10-14 16:00,,2012-05-16 08:00,2012-05-16 16:00,2012-05-16 08:00,2012-05-16 16:00,2012-05-16 08:00,2012-05-16 16:00,,2012-10-14 08:00,2012-10-14 16:00,,PT_Normal,,,,,XZtgVRoVaEqeLcQQR0YP+w,,,,N,0,0,,,2012-05-05 12:17,2012-05-16 14:02,admin,admin
1073,130523,3769,19894,1191,1,0,N,N,N,CP_Drtn,TT_Task,DT_FixedDUR2,RV_OK,TK_NotStart,MT-S-41,polyurethane foam submittal,,400,0,8,0,0,0,8,0,0,0,,,,2012-07-14 08:00,2012-07-14 16:00,,2012-05-16 08:00,2012-05-16 16:00,2012-05-16 08:00,2012-05-16 16:00,2012-05-16 08:00,2012-05-16 16:00,,2012-07-14 08:00,2012-07-14 16:00,,PT_Normal,,,,,ETMTOi02mES/JxT4pS0e7A,,,,N,0,0,,,2012-05-05 12:17,2012-05-16 14:02,admin,admin
1074,130524,3769,19894,1191,1,0,N,N,N,CP_Drtn,TT_Task,DT_FixedDUR2,RV_OK,TK_NotStart,MT-S-51,Foam concrete submittal,,920,0,8,0,0,0,8,0,0,0,,,,2012-09-27 08:00,2012-09-27 16:00,,2012-05-16 08:00,2012-05-16 16:00,2012-05-16 08:00,2012-05-16 16:00,2012-05-16 08:00,2012-05-16 16:00,,2012-09-27 08:00,2012-09-27 16:00,,PT_Normal,,,,,0kyeBnJuAEuNZmvr516cfA,,,,N,0,0,,,2012-05-05 12:17,2012-05-16 14:02,admin,admin
1075,130525,3769,19895,1191,1,100,N,N,N,CP_Drtn,TT_Task,DT_FixedDUR2,RV_OK,TK_Complete,MT-AP-1,Concrete design approval,,,,0,0,0,0,8,0,0,0,,2012-03-18 00:00,2012-03-18 00:00,,,,,,,,2012-04-30 08:00,2012-04-30 16:00,,,,,PT_Normal,,,,,Jl05rky4JkeRygC/FtGEaA,,,,N,0,0,,,2012-05-05 12:17,2012-05-16 14:02,admin,admin
1076,130526,3769,19895,1191,1,0,N,N,N,CP_Drtn,TT_Task,DT_FixedDUR2,RV_OK,TK_NotStart,MT-AP-11,Steel Rft approval,,1032,1032,8,0,0,0,8,0,0,0,,,,2012-10-15 08:00,2012-10-15 16:00,,2012-05-17 08:00,2012-05-17 16:00,2012-05-17 08:00,2012-05-17 16:00,2012-05-17 08:00,2012-05-17 16:00,,2012-10-15 08:00,2012-10-15 16:00,,PT_Normal,,,,,cU7QVA8ywECHOhG38/bJWw,,,,N,0,0,,,2012-05-05 12:17,2012-05-16 14:02,admin,admin
1077,130527,3769,19895,1191,1,0,N,N,N,CP_Drtn,TT_Task,DT_FixedDUR2,RV_OK,TK_NotStart,MT-AP-21,Bituminous paints approval,,920,106.4,8,0,0,0,8,0,0,0,,,,2012-09-29 08:00,2012-09-29 16:00,,2012-05-17 08:00,2012-05-17 16:00,2012-05-17 08:00,2012-05-17 16:00,2012-05-17 08:00,2012-05-17 16:00,,2012-09-29 08:00,2012-09-29 16:00,,PT_Normal,,,,,VSnL6L6upUi6NgAcb3pGDw,,,,N,0,0,,,2012-05-05 12:17,2012-05-16 14:02,admin,admin
1078,130528,3769,19895,1191,1,0,N,N,N,CP_Drtn,TT_Task,DT_FixedDUR2,RV_OK,TK_NotStart,MT-AP-31,proofing membrane approval,,1032,1032,8,0,0,0,8,0,0,0,,,,2012-10-15 08:00,2012-10-15 16:00,,2012-05-17 08:00,2012-05-17 16:00,2012-05-17 08:00,2012-05-17 16:00,2012-05-17 08:00,2012-05-17 16:00,,2012-10-15 08:00,2012-10-15 16:00,,PT_Normal,,,,,VQFWY694z0GIFb3TITtAyw,,,,N,0,0,,,2012-05-05 12:17,2012-05-16 14:02,admin,admin
1079,130529,3769,19895,1191,1,0,N,N,N,CP_Drtn,TT_Task,DT_FixedDUR2,RV_OK,TK_NotStart,MT-AP-41,polyurethane foam approval,,400,0,8,0,0,0,8,0,0,0,,,,2012-07-15 08:00,2012-07-15 16:00,,2012-05-17 08:00,2012-05-17 16:00,2012-05-17 08:00,2012-05-17 16:00,2012-05-17 08:00,2012-05-17 16:00,,2012-07-15 08:00,2012-07-15 16:00,,PT_Normal,,,,,qKr7Jrhlfk232U6VICpiWg,,,,N,0,0,,,2012-05-05 12:17,2012-05-16 14:02,admin,admin
1080,130530,3769,19895,1191,1,0,N,N,N,CP_Drtn,TT_Task,DT_FixedDUR2,RV_OK,TK_NotStart,MT-AP-51,Foam concrete approval,,920,496,8,0,0,0,8,0,0,0,,,,2012-09-29 08:00,2012-09-29 16:00,,2012-05-17 08:00,2012-05-17 16:00,2012-05-17 08:00,2012-05-17 16:00,2012-05-17 08:00,2012-05-17 16:00,,2012-09-29 08:00,2012-09-29 16:00,,PT_Normal,,,,,Iuhtmry2iE2Jr4EHy8fFWA,,,,N,0,0,,,2012-05-05 12:17,2012-05-16 14:02,admin,admin
1081,130531,3769,19896,1191,1,0,N,N,N,CP_Drtn,TT_Task,DT_FixedDUR2,RV_OK,TK_NotStart,MT-DD-61,polyurethane foam delivery(for cabines),,424,0,8,0,0,0,8,0,0,0,,,,2012-09-27 08:00,2012-09-27 16:00,,2012-07-28 08:00,2012-07-28 16:00,2012-07-28 08:00,2012-07-28 16:00,2012-07-28 08:00,2012-07-28 16:00,,2012-09-27 08:00,2012-09-27 16:00,,PT_Normal,,,,,3BRVDLRPlkKQdHsij/ERbQ,of/8pdmAakWR+Sdh+CjuMA,,,N,0,0,,,2012-05-05 12:17,2012-05-16 14:02,admin,admin
1082,130532,3769,19896,1191,1,0,N,N,N,CP_Drtn,TT_Task,DT_FixedDUR2,RV_OK,TK_NotStart,MT-DD-71,polyurethane foam delivery(for hotels),,400,0,8,0,0,0,8,0,0,0,,,,2012-10-06 08:00,2012-10-06 16:00,,2012-08-08 08:00,2012-08-08 16:00,2012-08-08 08:00,2012-08-08 16:00,2012-08-08 08:00,2012-08-08 16:00,,2012-10-06 08:00,2012-10-06 16:00,,PT_Normal,,,,,GwsanYcJe0ijxukc4J6G4Q,szjX2x+Mf0S+y55UhvG4Vg,,,N,0,0,,,2012-05-05 12:17,2012-05-16 14:02,admin,admin
1083,130533,3769,19926,1191,1,0,N,N,N,CP_Drtn,TT_Task,DT_FixedDUR2,RV_OK,TK_NotStart,SD-H-1-26,Basement roof,,992,0,8,0,0,0,8,0,0,0,,,,2012-10-08 08:00,2012-10-08 16:00,,2012-05-16 08:00,2012-05-16 16:00,2012-05-16 08:00,2012-05-16 16:00,2012-05-16 08:00,2012-05-16 16:00,,2012-10-08 08:00,2012-10-08 16:00,,PT_Normal,,,,,7+G9BJSXn0uVYMeI0oE+gw,NP9tp4Zc6kS2zR8EGa3P8w,,,N,0,0,,,2012-05-05 12:17,2012-05-16 14:02,admin,admin
1084,130534,3769,19927,1191,1,0,N,N,N,CP_Drtn,TT_Task,DT_FixedDUR2,RV_OK,TK_NotStart,SD-H-12-25,Basement columns,,144,0,8,0,0,0,8,0,0,0,,,,2012-06-14 08:00,2012-06-14 16:00,,2012-05-24 08:00,2012-05-24 16:00,2012-05-24 08:00,2012-05-24 16:00,2012-05-24 08:00,2012-05-24 16:00,,2012-06-14 08:00,2012-06-14 16:00,,PT_Normal,,,,,3ZHDlNnh3EuBBlExsrHCZg,LdRVh1RRWEyUsiCIv+XUeg,,,N,0,0,,,2012-05-05 12:17,2012-05-16 14:02,admin,admin
1085,130535,3769,19927,1191,1,0,N,N,N,CP_Drtn,TT_Task,DT_FixedDUR2,RV_OK,TK_NotStart,SD-H-12-26,Basement roof,,208,0,8,0,0,0,8,0,0,0,,,,2012-06-24 08:00,2012-06-24 16:00,,2012-05-24 08:00,2012-05-24 16:00,2012-05-24 08:00,2012-05-24 16:00,2012-05-24 08:00,2012-05-24 16:00,,2012-06-24 08:00,2012-06-24 16:00,,PT_Normal,,,,,dp1jABfuXkqn3/8XAJFvVA,J+xgcwhlXU6pwGD2TOsl9Q,,,N,0,0,,,2012-05-05 12:17,2012-05-16 14:02,admin,admin
1086,130536,3769,19946,1191,1,100,N,N,N,CP_Drtn,TT_Task,DT_FixedDUR2,RV_OK,TK_Complete,AP-H-1-21,Basement columns,,,,0,0,0,0,8,0,0,0,,2012-04-29 00:00,2012-04-29 00:00,,,,,,,,2012-05-11 08:00,2012-05-11 16:00,,,,,PT_Normal,,,,,uFghjDOoK0+VKIvuPbx8WA,IplkA+NxC0mKeJS+SYTIdw,,,N,0,0,,,2012-05-05 12:17,2012-05-16 14:02,admin,admin
1087,130537,3769,19946,1191,1,0,N,N,N,CP_Drtn,TT_Task,DT_FixedDUR2,RV_OK,TK_NotStart,AP-H-1-22,Basement roof,,992,992,8,0,0,0,8,0,0,0,,,,2012-10-15 08:00,2012-10-15 16:00,,2012-05-23 08:00,2012-05-23 16:00,2012-05-23 08:00,2012-05-23 16:00,2012-05-23 08:00,2012-05-23 16:00,,2012-10-15 08:00,2012-10-15 16:00,,PT_Normal,,,,,/MTk4CNqRUiH/fvYMI6mzA,tY9I2yAd1U+m5rTXTcE1uw,,,N,0,0,,,2012-05-05 12:17,2012-05-16 14:02,admin,admin
1088,130538,3769,19931,1191,1,0,N,N,N,CP_Drtn,TT_Task,DT_FixedDUR2,RV_OK,TK_NotStart,AP-H-12-21,Basement columns,,144,120,8,0,0,0,8,0,0,0,,,,2012-06-21 08:00,2012-06-21 16:00,,2012-05-31 08:00,2012-05-31 16:00,2012-05-31 08:00,2012-05-31 16:00,2012-05-31 08:00,2012-05-31 16:00,,2012-06-21 08:00,2012-06-21 16:00,,PT_Normal,,,,,kGq5/vNMckCxbQyj2GyH0A,70FnPYEsX0+yfOj3Woz4LA,,,N,0,0,,,2012-05-05 12:17,2012-05-16 14:02,admin,admin
1089,130539,3769,19931,1191,1,0,N,N,N,CP_Drtn,TT_Task,DT_FixedDUR2,RV_OK,TK_NotStart,AP-H-12-22,Basement roof,,208,192,8,0,0,0,8,0,0,0,,,,2012-07-01 08:00,2012-07-01 16:00,,2012-05-31 08:00,2012-05-31 16:00,2012-05-31 08:00,2012-05-31 16:00,2012-05-31 08:00,2012-05-31 16:00,,2012-07-01 08:00,2012-07-01 16:00,,PT_Normal,,,,,vt0vjsxUxUORGjDs0fdm+Q,6W//GJxMdESBHRZ0k+GsUA,,,N,0,0,,,2012-05-05 12:17,2012-05-16 14:02,admin,admin
1090,130540,3769,19926,1191,1,100,N,N,N,CP_Drtn,TT_Task,DT_FixedDUR2,RV_OK,TK_Complete,SD-H-1-27,Basement columns,,,,0,0,0,0,8,0,0,0,,2012-04-28 00:00,2012-04-28 00:00,,,,,,,,2012-05-05 08:00,2012-05-05 16:00,,,,,PT_Normal,,,,,iKSQFNlP7UaN+/ySV6lEkQ,,,,N,0,0,,,2012-05-05 12:17,2012-05-16 14:02,admin,admin
