,task_id,proj_id,wbs_id,clndr_id,phys_complete_pct,rev_fdbk_flag,lock_plan_flag,auto_compute_act_flag,complete_pct_type,task_type,duration_type,status_code,task_code,task_name,rsrc_id,total_float_hr_cnt,free_float_hr_cnt,remain_drtn_hr_cnt,act_work_qty,remain_work_qty,target_work_qty,target_drtn_hr_cnt,target_equip_qty,act_equip_qty,remain_equip_qty,cstr_date,act_start_date,act_end_date,late_start_date,late_end_date,expect_end_date,early_start_date,early_end_date,restart_date,reend_date,target_start_date,target_end_date,rem_late_start_date,rem_late_end_date,cstr_type,priority_type,suspend_date,resume_date,float_path,float_path_order,guid,tmpl_guid,cstr_date2,cstr_type2,driving_path_flag,act_this_per_work_qty,act_this_per_equip_qty,external_early_start_date,external_late_end_date,create_date,update_date,create_user,update_user,location_id
0,101717,4512,26142,6590,0,N,N,N,CP_Drtn,TT_Task,DT_FixedDUR2,TK_NotStart,JF721.320,PO Issued,,272,0,24,0,0,0,24,0,0,0,,,,2012-07-30 15:00,2012-08-02 09:00,,2012-07-01 13:00,2012-07-03 17:00,2012-07-01 13:00,2012-07-03 17:00,2012-07-01 13:00,2012-07-03 17:00,2012-07-30 15:00,2012-08-02 09:00,,PT_Normal,,,,,T/oad8DTBkuyjfZTZt+2IA,zCk7aObfCUGOntxgxjFmMQ,,,N,0,0,,,2013-11-05 11:09,2013-11-05 11:09,admin,admin,
1,101718,4512,26142,6590,0,N,N,N,CP_Drtn,TT_Task,DT_FixedDUR2,TK_NotStart,JF721.321,Ma'aden Site Delievery,,272,0,56,0,0,0,56,0,0,0,,,,2012-08-02 09:00,2012-08-08 10:00,,2012-07-04 07:00,2012-07-10 08:00,2012-07-04 07:00,2012-07-10 08:00,2012-07-04 07:00,2012-07-10 08:00,2012-08-02 09:00,2012-08-08 10:00,,PT_Normal,,,,,0Sgey7t6W0atx+v1l5Jl2g,6oHrZtG370unhirho4VupA,,,N,0,0,,,2013-11-05 11:09,2013-11-05 11:09,admin,admin,
2,101719,4512,26080,6590,0,N,N,N,CP_Drtn,TT_Task,DT_FixedDUR2,TK_NotStart,JF721.322,Approval for Vendor Drawings & SPecifications,,352,0,24,0,0,0,24,0,0,0,,,,2012-09-03 16:00,2012-09-06 10:00,,2012-07-24 14:00,2012-07-27 10:30,2012-07-24 14:00,2012-07-27 10:30,2012-07-24 14:00,2012-07-27 10:30,2012-09-03 16:00,2012-09-06 10:00,,PT_Normal,,,,,QnxD6XdTwUO09jBJRyz1nw,6r11gtJdnUe/59WOKiaHmQ,,,N,0,0,,,2013-11-05 11:09,2013-11-05 11:09,admin,admin,
3,101720,4512,26080,6590,0,N,N,N,CP_Drtn,TT_Task,DT_FixedDUR2,TK_NotStart,JF721.323,PO Issued,,1328,0,216,0,0,0,216,0,0,0,,,,2012-12-22 11:00,2013-01-14 12:00,,2012-07-27 10:30,2012-08-22 14:00,2012-07-27 10:30,2012-08-22 14:00,2012-07-27 10:30,2012-08-22 14:00,2012-12-22 11:00,2013-01-14 12:00,,PT_Normal,,,,,NCA5ArXcL0uBhKyXI2t1XQ,NmLAcJcOhUaoeMu+fvzAow,,,N,0,0,,,2013-11-05 11:09,2013-11-05 11:09,admin,admin,
4,101721,4512,26080,6590,0,N,N,N,CP_Drtn,TT_Task,DT_FixedDUR2,TK_NotStart,JF721.324,CP System Delievered to Ma'aden Site & Installed,6965,272,0,240,0,2250,2250,240,1000,0,1000,,,,2013-05-24 12:30,2013-06-19 10:00,,2013-04-25 08:00,2013-05-21 08:00,2013-04-25 08:00,2013-05-21 08:00,2013-04-25 08:00,2013-05-21 08:00,2013-05-24 12:30,2013-06-19 10:00,,PT_Normal,,,,,uwVfmXb4hEizuB4gC4ryvA,+o+DyVVQ/kCd+4ON0641Rw,,,N,0,0,,,2013-11-05 11:09,2013-11-05 11:09,admin,admin,
5,101722,4512,26080,6590,0,N,N,N,CP_Drtn,TT_Task,DT_FixedDUR2,TK_NotStart,JF721.325,Ma'aden CP Inspection,6964,272,0,24,0,80,80,24,40,0,40,,,,2013-06-19 10:00,2013-06-22 09:00,,2013-05-21 08:00,2013-05-23 12:00,2013-05-21 08:00,2013-05-23 12:00,2013-05-21 08:00,2013-05-23 12:00,2013-06-19 10:00,2013-06-22 09:00,,PT_Normal,,,,,kVe0BI0PZ0OOiyeP1BLRxw,DX4s+DB7hUuHMSWuFd396Q,,,N,0,0,,,2013-11-05 11:09,2013-11-05 11:09,admin,admin,
6,101723,4512,26045,6590,0,N,N,N,CP_Drtn,TT_Task,DT_FixedDUR2,TK_NotStart,JF721.328,Approval For Vendor Drawings & Specifications,,352,0,24,0,0,0,24,0,0,0,,,,2012-09-03 16:00,2012-09-06 10:00,,2012-07-24 14:00,2012-07-27 10:30,2012-07-24 14:00,2012-07-27 10:30,2012-07-24 14:00,2012-07-27 10:30,2012-09-03 16:00,2012-09-06 10:00,,PT_Normal,,,,,XDmFCoe/rUmmw6uqcKigmA,xFeCmUgdS0OLH25pLZzIMQ,,,N,0,0,,,2013-11-05 11:09,2013-11-05 11:09,admin,admin,
7,101724,4512,26045,6590,0,N,N,N,CP_Drtn,TT_Task,DT_FixedDUR2,TK_NotStart,JF721.329,P.O Issued,,1328,0,216,0,0,0,216,0,0,0,,,,2012-12-22 11:00,2013-01-14 12:00,,2012-07-27 10:30,2012-08-22 14:00,2012-07-27 10:30,2012-08-22 14:00,2012-07-27 10:30,2012-08-22 14:00,2012-12-22 11:00,2013-01-14 12:00,,PT_Normal,,,,,199nQXkmpkWWySSCkmbcJg,qnXKJs7SVE2Aq/+ydLIq0g,,,N,0,0,,,2013-11-05 11:09,2013-11-05 11:09,admin,admin,
8,101725,4512,26046,6590,0,N,N,N,CP_Drtn,TT_Task,DT_FixedDUR2,TK_NotStart,JF721.330,Approval for vendor Drawings & Specifcations,,352,0,24,0,0,0,24,0,0,0,,,,2012-09-03 16:00,2012-09-06 10:00,,2012-07-24 14:00,2012-07-27 10:30,2012-07-24 14:00,2012-07-27 10:30,2012-07-24 14:00,2012-07-27 10:30,2012-09-03 16:00,2012-09-06 10:00,,PT_Normal,,,,,zhBl2Q5mZUm6Zh0wvyELhg,cSJ8dgKJP0Ww5ZhDDHiEBQ,,,N,0,0,,,2013-11-05 11:09,2013-11-05 11:09,admin,admin,
9,101726,4512,26046,6590,0,N,N,N,CP_Drtn,TT_Task,DT_FixedDUR2,TK_NotStart,JF721.331,P.O Issued,,1328,0,216,0,0,0,216,0,0,0,,,,2012-12-22 11:00,2013-01-14 12:00,,2012-07-27 10:30,2012-08-22 14:00,2012-07-27 10:30,2012-08-22 14:00,2012-07-27 10:30,2012-08-22 14:00,2012-12-22 11:00,2013-01-14 12:00,,PT_Normal,,,,,DllYCkazDUCFNJjjIsMqtw,oeNA0lF1IUuYn1p65K4tsA,,,N,0,0,,,2013-11-05 11:09,2013-11-05 11:09,admin,admin,
10,101727,4512,26046,6590,0,N,N,N,CP_Drtn,TT_Task,DT_FixedDUR2,TK_NotStart,JF721.332,Instrumentation Delievered to Ma'aden & Installed,6942,272,0,232,0,1260,1260,232,560,0,560,,,,2013-06-22 09:00,2013-07-16 16:00,,2013-05-23 12:00,2013-06-17 14:00,2013-05-23 12:00,2013-06-17 14:00,2013-05-23 12:00,2013-06-17 14:00,2013-06-22 09:00,2013-07-16 16:00,,PT_Normal,,,,,9EZm2Ai1aEGYTY4j/Sp6bQ,XWpE3LpQKUSrjVSLh/WhAA,,,N,0,0,,,2013-11-05 11:09,2013-11-05 11:09,admin,admin,
11,101728,4512,26046,6590,0,N,N,N,CP_Drtn,TT_Task,DT_FixedDUR2,TK_NotStart,JF721.333,Ma'aden Instrumentation Inspection,6942,272,0,24,0,80,80,24,40,0,40,,,,2013-07-16 16:00,2013-07-19 12:30,,2013-06-17 14:00,2013-06-20 08:00,2013-06-17 14:00,2013-06-20 08:00,2013-06-17 14:00,2013-06-20 08:00,2013-07-16 16:00,2013-07-19 12:30,,PT_Normal,,,,,ISM75neHJkSa8CYlKBOLBA,o7LARIfvNEaQ09oTYwd4YA,,,N,0,0,,,2013-11-05 11:09,2013-11-05 11:09,admin,admin,
12,101729,4512,26042,6590,0,N,N,N,CP_Drtn,TT_Task,DT_FixedDUR2,TK_NotStart,JF721.334,Approve Vendor Drawings & Specifcations,,352,0,24,0,0,0,24,0,0,0,,,,2012-08-28 07:00,2012-08-30 11:00,,2012-07-17 15:00,2012-07-20 11:30,2012-07-17 15:00,2012-07-20 11:30,2012-07-17 15:00,2012-07-20 11:30,2012-08-28 07:00,2012-08-30 11:00,,PT_Normal,,,,,1g4vNk+iHU2f706T8KsJGw,UxxwI734Ikm3B6zma4PbGA,,,N,0,0,,,2013-11-05 11:09,2013-11-05 11:09,admin,admin,
13,101730,4512,26042,6590,0,N,N,N,CP_Drtn,TT_Task,DT_FixedDUR2,TK_NotStart,JF721.335,P.O Issued,,352,0,24,0,0,0,24,0,0,0,,,,2012-08-30 11:00,2012-09-02 10:00,,2012-07-20 11:30,2012-07-23 08:00,2012-07-20 11:30,2012-07-23 08:00,2012-07-20 11:30,2012-07-23 08:00,2012-08-30 11:00,2012-09-02 10:00,,PT_Normal,,,,,42LJRWY15Uua3r1Eq6qHPw,Y+QGEhmC5UqgCTu9l309JA,,,N,0,0,,,2013-11-05 11:09,2013-11-05 11:09,admin,admin,
14,101731,4512,26065,6590,0,N,N,N,CP_Drtn,TT_Task,DT_FixedDUR2,TK_NotStart,JF721.336,Approval for Vendor Drawings & Specifications,,352,0,48,0,0,0,48,0,0,0,,,,2012-09-06 10:00,2012-09-11 13:00,,2012-07-27 10:30,2012-08-01 11:00,2012-07-27 10:30,2012-08-01 11:00,2012-07-27 10:30,2012-08-01 11:00,2012-09-06 10:00,2012-09-11 13:00,,PT_Normal,,,,,1Ke+WccJ0Ey/H+MB5+otDA,At760YrmaEqZSF6XKJXmdA,,,N,0,0,,,2013-11-05 11:09,2013-11-05 11:09,admin,admin,
15,101732,4512,26065,6590,0,N,N,N,CP_Drtn,TT_Task,DT_FixedDUR2,TK_NotStart,JF721.337,PO  Issued,,1264,0,48,0,0,0,48,0,0,0,,,,2012-12-20 10:00,2012-12-25 13:00,,2012-08-01 11:00,2012-08-06 14:00,2012-08-01 11:00,2012-08-06 14:00,2012-08-01 11:00,2012-08-06 14:00,2012-12-20 10:00,2012-12-25 13:00,,PT_Normal,,,,,VYLsxEOBXk6SveFo1PWEZw,QM2hzVjO+0OX23YpP0LSlA,,,N,0,0,,,2013-11-05 11:09,2013-11-05 11:09,admin,admin,
16,101733,4512,26044,6590,0,N,N,N,CP_Drtn,TT_Task,DT_FixedDUR2,TK_NotStart,JF721.338,Approval for Vendor Drawings & Specifications,,352,0,48,0,0,0,48,0,0,0,,,,2012-09-06 10:00,2012-09-11 13:00,,2012-07-27 10:30,2012-08-01 11:00,2012-07-27 10:30,2012-08-01 11:00,2012-07-27 10:30,2012-08-01 11:00,2012-09-06 10:00,2012-09-11 13:00,,PT_Normal,,,,,luwdIQwZ70uRE46DhznhvA,P4hIy46WnkaAgBahNcd1Fg,,,N,0,0,,,2013-11-05 11:09,2013-11-05 11:09,admin,admin,
17,101734,4512,26044,6590,0,N,N,N,CP_Drtn,TT_Task,DT_FixedDUR2,TK_NotStart,JF721.339,PO issued,,352,0,48,0,0,0,48,0,0,0,,,,2012-09-11 13:00,2012-09-16 16:00,,2012-08-01 11:00,2012-08-06 14:00,2012-08-01 11:00,2012-08-06 14:00,2012-08-01 11:00,2012-08-06 14:00,2012-09-11 13:00,2012-09-16 16:00,,PT_Normal,,,,,djG/P7ufLkm+XuENaz8t1w,Q+7N4KuxlESJ8vFhIW4qJw,,,N,0,0,,,2013-11-05 11:09,2013-11-05 11:09,admin,admin,
18,101735,4512,26067,6590,0,N,N,N,CP_Drtn,TT_Task,DT_FixedDUR2,TK_NotStart,JF721.340,Approval For vendor Specifcations,,680,0,64,0,0,0,64,0,0,0,,,,2012-10-16 16:00,2012-10-23 15:00,,2012-08-01 11:00,2012-08-08 10:00,2012-08-01 11:00,2012-08-08 10:00,2012-08-01 11:00,2012-08-08 10:00,2012-10-16 16:00,2012-10-23 15:00,,PT_Normal,,,,,efhnQOCqo0y1hA73tkFeOA,y+HmYyh9cEyxgRIPJ0WXkQ,,,N,0,0,,,2013-11-05 11:09,2013-11-05 11:09,admin,admin,
19,101736,4512,26067,6590,0,N,N,N,CP_Drtn,TT_Task,DT_FixedDUR2,TK_NotStart,JF721.341,PO issued,,680,0,32,0,0,0,32,0,0,0,,,,2012-10-23 15:00,2012-10-28 17:00,,2012-08-08 10:00,2012-08-11 17:00,2012-08-08 10:00,2012-08-11 17:00,2012-08-08 10:00,2012-08-11 17:00,2012-10-23 15:00,2012-10-28 17:00,,PT_Normal,,,,,Fgp5hsn8lUKGnwo9RMAlhA,np9x9mx8dE6Sens4t7ctEQ,,,N,0,0,,,2013-11-05 11:09,2013-11-05 11:09,admin,admin,
20,101737,4512,26068,6590,0,N,N,N,CP_Drtn,TT_Task,DT_FixedDUR2,TK_NotStart,JF721.342,Plates,,352,0,736,0,0,0,736,0,0,0,,,,2012-09-02 10:00,2012-11-21 16:00,,2012-07-23 08:00,2012-10-13 14:00,2012-07-23 08:00,2012-10-13 14:00,2012-07-23 08:00,2012-10-13 14:00,2012-09-02 10:00,2012-11-21 16:00,,PT_Normal,,,,,84CVgu4BK0a01kVWHeGLxg,p4b5Mw6c2Uau5vTANZNEzw,,,N,0,0,,,2013-11-05 11:09,2013-11-05 11:09,admin,admin,
21,101738,4512,26068,6590,0,N,N,N,CP_Drtn,TT_Task,DT_FixedDUR2,TK_NotStart,JF721.344,Profile Material,,1264,64,256,0,0,0,256,0,0,0,,,,2012-12-25 13:00,2013-01-22 09:00,,2012-08-06 14:00,2012-09-06 10:00,2012-08-06 14:00,2012-09-06 10:00,2012-08-06 14:00,2012-09-06 10:00,2012-12-25 13:00,2013-01-22 09:00,,PT_Normal,,,,,KDccazFDDUW9k1bEkkcY8g,XvbN9j8Um0u+a5vi4V340A,,,N,0,0,,,2013-11-05 11:09,2013-11-05 11:09,admin,admin,
22,101739,4512,26068,6590,0,N,N,N,CP_Drtn,TT_Task,DT_FixedDUR2,TK_NotStart,JF721.343,Pipes & Fittings,,352,0,376,0,0,0,376,0,0,0,,,,2012-09-16 16:00,2012-10-28 17:00,,2012-08-06 14:00,2012-09-19 10:00,2012-08-06 14:00,2012-09-19 10:00,2012-08-06 14:00,2012-09-19 10:00,2012-09-16 16:00,2012-10-28 17:00,,PT_Normal,,,,,vgNT16VQDEiUPXuBOBz0Bg,xlcN0EV8I0SapJEwHcmzTg,,,N,0,0,,,2013-11-05 11:09,2013-11-05 11:09,admin,admin,
23,101740,4512,26040,6590,0,N,N,N,CP_Drtn,TT_Task,DT_FixedDUR2,TK_NotStart,JF721.345,Define Layout,,352,0,24,0,0,0,24,0,0,0,,,,2012-10-14 12:00,2012-10-16 16:00,,2012-09-06 10:00,2012-09-09 09:00,2012-09-06 10:00,2012-09-09 09:00,2012-09-06 10:00,2012-09-09 09:00,2012-10-14 12:00,2012-10-16 16:00,,PT_Normal,,,,,3G6twJMsg0uejPlg8Ts0Tw,NqASMdRNOUqFzefQ0Sq3bQ,,,N,0,0,,,2013-11-05 11:09,2013-11-05 11:09,admin,admin,
24,101741,4512,26040,6590,0,N,N,N,CP_Drtn,TT_Task,DT_FixedDUR2,TK_NotStart,JF721.346,Cutting,,352,0,24,0,0,0,24,0,0,0,,,,2012-10-14 12:00,2012-10-16 16:00,,2012-09-06 10:00,2012-09-09 09:00,2012-09-06 10:00,2012-09-09 09:00,2012-09-06 10:00,2012-09-09 09:00,2012-10-14 12:00,2012-10-16 16:00,,PT_Normal,,,,,GuhtaQP89EyFpJKDFGG+Yg,tt3gxgqxak+7rDxte4XbAg,,,N,0,0,,,2013-11-05 11:09,2013-11-05 11:09,admin,admin,
25,101742,4512,26040,6590,0,N,N,N,CP_Drtn,TT_Task,DT_FixedDUR2,TK_NotStart,JF721.347,Fit-up,,352,0,32,0,0,0,32,0,0,0,,,,2012-10-18 12:00,2012-10-22 09:00,,2012-09-10 15:00,2012-09-13 17:00,2012-09-10 15:00,2012-09-13 17:00,2012-09-10 15:00,2012-09-13 17:00,2012-10-18 12:00,2012-10-22 09:00,,PT_Normal,,,,,WZg0KG7tHEKs8Wj3C2bRRA,+bPJdke39EC0UzUc8wEY4A,,,N,0,0,,,2013-11-05 11:09,2013-11-05 11:09,admin,admin,
26,101743,4512,26040,6590,0,N,N,N,CP_Drtn,TT_Task,DT_FixedDUR2,TK_NotStart,JF721.348,Welding,,352,0,32,0,0,0,32,0,0,0,,,,2012-10-19 12:30,2012-10-22 17:00,,2012-09-11 13:00,2012-09-15 10:00,2012-09-11 13:00,2012-09-15 10:00,2012-09-11 13:00,2012-09-15 10:00,2012-10-19 12:30,2012-10-22 17:00,,PT_Normal,,,,,gxmXPeSit0mEE/CMbQraqQ,BabspVpVGkKisBRG/u9JMw,,,N,0,0,,,2013-11-05 11:09,2013-11-05 11:09,admin,admin,
27,101744,4512,26040,6590,0,N,N,N,CP_Drtn,TT_Task,DT_FixedDUR2,TK_NotStart,JF721.349,Shop Blasting/Painting,,352,0,32,0,0,0,32,0,0,0,,,,2012-10-20 13:00,2012-10-23 15:00,,2012-09-12 11:00,2012-09-16 08:00,2012-09-12 11:00,2012-09-16 08:00,2012-09-12 11:00,2012-09-16 08:00,2012-10-20 13:00,2012-10-23 15:00,,PT_Normal,,,,,tQSIXrGhPkyGjisOa98qYQ,JgwK0VqNtkWPp1NEl6/QyA,,,N,0,0,,,2013-11-05 11:09,2013-11-05 11:09,admin,admin,
28,101745,4512,26040,6590,0,N,N,N,CP_Drtn,TT_Task,DT_FixedDUR2,TK_NotStart,JF721.350,Inspect & Accept for use,,352,0,24,0,0,0,24,0,0,0,,,,2012-10-23 15:00,2012-10-28 09:00,,2012-09-16 08:00,2012-09-18 12:00,2012-09-16 08:00,2012-09-18 12:00,2012-09-16 08:00,2012-09-18 12:00,2012-10-23 15:00,2012-10-28 09:00,,PT_Normal,,,,,yg0c5YHsWkm6rX7W9XTwKg,NIRxJhgScUO/HK/CeyoG5g,,,N,0,0,,,2013-11-05 11:09,2013-11-05 11:09,admin,admin,
29,101746,4512,26053,6590,0,N,N,N,CP_Drtn,TT_Task,DT_FixedDUR2,TK_NotStart,JF721.351,Define Layout,,800,0,32,0,0,0,32,0,0,0,,,,2012-12-05 14:00,2012-12-09 11:00,,2012-09-09 09:00,2012-09-12 11:00,2012-09-09 09:00,2012-09-12 11:00,2012-09-09 09:00,2012-09-12 11:00,2012-12-05 14:00,2012-12-09 11:00,,PT_Normal,,,,,KGkz+N8IQkW+vPet8LScrA,KvXnSNnJE0ebZGxmJ4g79A,,,N,0,0,,,2013-11-05 11:09,2013-11-05 11:09,admin,admin,
30,101747,4512,26053,6590,0,N,N,N,CP_Drtn,TT_Task,DT_FixedDUR2,TK_NotStart,JF721.352,Cutting,,800,0,40,0,0,0,40,0,0,0,,,,2012-12-05 14:00,2012-12-10 09:00,,2012-09-09 09:00,2012-09-13 09:00,2012-09-09 09:00,2012-09-13 09:00,2012-09-09 09:00,2012-09-13 09:00,2012-12-05 14:00,2012-12-10 09:00,,PT_Normal,,,,,7KmGrDWRuEm4JnzCVPno9A,HpEj9IuMTkSNMW2leNhO7Q,,,N,0,0,,,2013-11-05 11:09,2013-11-05 11:09,admin,admin,
31,101748,4512,26053,6590,0,N,N,N,CP_Drtn,TT_Task,DT_FixedDUR2,TK_NotStart,JF721.353,Bevelling/Rolling,,800,0,48,0,0,0,48,0,0,0,,,,2012-12-07 12:30,2012-12-12 13:00,,2012-09-10 15:00,2012-09-16 08:00,2012-09-10 15:00,2012-09-16 08:00,2012-09-10 15:00,2012-09-16 08:00,2012-12-07 12:30,2012-12-12 13:00,,PT_Normal,,,,,7XElssWX2UO13yevrxcZLg,cYzpiAMs+0KOa/HVaZX2AA,,,N,0,0,,,2013-11-05 11:09,2013-11-05 11:09,admin,admin,
32,101749,4512,26053,6590,0,N,N,N,CP_Drtn,TT_Task,DT_FixedDUR2,TK_NotStart,JF721.354,Shop Blasting/Painting,,800,0,48,0,0,0,48,0,0,0,,,,2012-12-10 09:00,2012-12-15 12:00,,2012-09-13 09:00,2012-09-18 12:00,2012-09-13 09:00,2012-09-18 12:00,2012-09-13 09:00,2012-09-18 12:00,2012-12-10 09:00,2012-12-15 12:00,,PT_Normal,,,,,7qRNWNf/BUi/ZMI5YlKORw,7HNi5PeaV0y2Y2hivMcf9w,,,N,0,0,,,2013-11-05 11:09,2013-11-05 11:09,admin,admin,
33,101750,4512,26053,6590,0,N,N,N,CP_Drtn,TT_Task,DT_FixedDUR2,TK_NotStart,JF721.355,Inspect & Accept for use,,800,0,32,0,0,0,32,0,0,0,,,,2012-12-15 12:00,2012-12-18 14:00,,2012-09-18 12:00,2012-09-22 09:00,2012-09-18 12:00,2012-09-22 09:00,2012-09-18 12:00,2012-09-22 09:00,2012-12-15 12:00,2012-12-18 14:00,,PT_Normal,,,,,gYidmF4U70WqW2W2/taBiQ,2GHiYf/TR0Koqh0FB+0+zg,,,N,0,0,,,2013-11-05 11:09,2013-11-05 11:09,admin,admin,
34,101751,4512,26038,6590,0,N,N,N,CP_Drtn,TT_Task,DT_FixedDUR2,TK_NotStart,JF721.356,Define layout,,1200,0,24,0,0,0,24,0,0,0,,,,2013-01-22 09:00,2013-01-24 13:00,,2012-09-13 09:00,2012-09-16 08:00,2012-09-13 09:00,2012-09-16 08:00,2012-09-13 09:00,2012-09-16 08:00,2013-01-22 09:00,2013-01-24 13:00,,PT_Normal,,,,,ukPIRYFgE0eFOJG7GaWArQ,BObSzZpwSEyt71E/AtUl6w,,,N,0,0,,,2013-11-05 11:09,2013-11-05 11:09,admin,admin,
35,101752,4512,26038,6590,0,N,N,N,CP_Drtn,TT_Task,DT_FixedDUR2,TK_NotStart,JF721.357,Cutting,,1200,0,32,0,0,0,32,0,0,0,,,,2013-01-24 13:00,2013-01-27 19:00,,2012-09-16 08:00,2012-09-19 10:00,2012-09-16 08:00,2012-09-19 10:00,2012-09-16 08:00,2012-09-19 10:00,2013-01-24 13:00,2013-01-27 19:00,,PT_Normal,,,,,hvnBElDZ80el4rELwryefg,AmRQTCoh50qjBmbNOJIlPA,,,N,0,0,,,2013-11-05 11:09,2013-11-05 11:09,admin,admin,
36,101753,4512,26038,6590,0,N,N,N,CP_Drtn,TT_Task,DT_FixedDUR2,TK_NotStart,JF721.358,Bevelling,,1200,0,40,0,0,0,40,0,0,0,,,,2013-01-25 13:30,2013-01-29 08:00,,2012-09-16 16:00,2012-09-20 16:00,2012-09-16 16:00,2012-09-20 16:00,2012-09-16 16:00,2012-09-20 16:00,2013-01-25 13:30,2013-01-29 08:00,,PT_Normal,,,,,0F8eWv3MVkOnnFX1DY3RWA,yFpHDPcaYUWOe29l70K2vw,,,N,0,0,,,2013-11-05 11:09,2013-11-05 11:09,admin,admin,
37,101754,4512,26038,6590,0,N,N,N,CP_Drtn,TT_Task,DT_FixedDUR2,TK_NotStart,JF721.359,Fit-up/Welding,,1200,0,48,0,0,0,48,0,0,0,,,,2013-01-27 11:00,2013-01-31 12:00,,2012-09-18 12:00,2012-09-23 15:00,2012-09-18 12:00,2012-09-23 15:00,2012-09-18 12:00,2012-09-23 15:00,2013-01-27 11:00,2013-01-31 12:00,,PT_Normal,,,,,Rrzrf/WA60WoE50Ew+Sr5Q,qSE5Fing/0mvKJhg5mIVeA,,,N,0,0,,,2013-11-05 11:09,2013-11-05 11:09,admin,admin,
38,101755,4512,26038,6590,0,N,N,N,CP_Drtn,TT_Task,DT_FixedDUR2,TK_NotStart,JF721.360,Blasting/Painting,,1200,0,56,0,0,0,56,0,0,0,,,,2013-01-29 08:00,2013-02-04 09:00,,2012-09-20 16:00,2012-09-26 17:00,2012-09-20 16:00,2012-09-26 17:00,2012-09-20 16:00,2012-09-26 17:00,2013-01-29 08:00,2013-02-04 09:00,,PT_Normal,,,,,sqHn8hnGWU+yZZQiATwqFA,P4/Fk4uRBEatogu64eu/Nw,,,N,0,0,,,2013-11-05 11:09,2013-11-05 11:09,admin,admin,
39,101756,4512,26038,6590,0,N,N,N,CP_Drtn,TT_Task,DT_FixedDUR2,TK_NotStart,JF721.361,Inspect & Accept for use,,1200,0,24,0,0,0,24,0,0,0,,,,2013-02-04 09:00,2013-02-06 13:00,,2012-09-27 07:00,2012-09-29 16:00,2012-09-27 07:00,2012-09-29 16:00,2012-09-27 07:00,2012-09-29 16:00,2013-02-04 09:00,2013-02-06 13:00,,PT_Normal,,,,,eQfShOfbuUq/qp1MibuY4A,mf4ZiKwzEkWAlgfh/a1UzQ,,,N,0,0,,,2013-11-05 11:09,2013-11-05 11:09,admin,admin,
40,101757,4512,26072,6590,0,N,N,N,CP_Drtn,TT_Task,DT_FixedDUR2,TK_NotStart,JF721.362,Define Layout,,1336,0,40,0,0,0,40,0,0,0,,,,2013-02-15 10:30,2013-02-19 13:00,,2012-09-23 15:00,2012-09-27 15:00,2012-09-23 15:00,2012-09-27 15:00,2012-09-23 15:00,2012-09-27 15:00,2013-02-15 10:30,2013-02-19 13:00,,PT_Normal,,,,,eIQ2UlKpf0WWkULxTtEgrA,4EwGlVvj1Euqj7jLBXyyvw,,,N,0,0,,,2013-11-05 11:09,2013-11-05 11:09,admin,admin,
41,101758,4512,26072,6590,0,N,N,N,CP_Drtn,TT_Task,DT_FixedDUR2,TK_NotStart,JF721.363,Cutting,,1336,0,56,0,0,0,56,0,0,0,,,,2013-02-19 13:00,2013-02-25 14:00,,2012-09-27 15:00,2012-10-03 16:00,2012-09-27 15:00,2012-10-03 16:00,2012-09-27 15:00,2012-10-03 16:00,2013-02-19 13:00,2013-02-25 14:00,,PT_Normal,,,,,OAQbYDzh/UyYnNIdLnsYNw,FnjnSPuQ8EGpxBoPL3gghg,,,N,0,0,,,2013-11-05 11:09,2013-11-05 11:09,admin,admin,
42,101759,4512,26072,6590,0,N,N,N,CP_Drtn,TT_Task,DT_FixedDUR2,TK_NotStart,JF721.364,Fit-Up,,1336,0,80,0,0,0,80,0,0,0,,,,2013-02-25 14:00,2013-03-06 09:00,,2012-10-03 16:00,2012-10-12 13:30,2012-10-03 16:00,2012-10-12 13:30,2012-10-03 16:00,2012-10-12 13:30,2013-02-25 14:00,2013-03-06 09:00,,PT_Normal,,,,,dcAdNgTmMUCCcFBHufcIuQ,2Avp9YRmPUmCASJKMgeCLg,,,N,0,0,,,2013-11-05 11:09,2013-11-05 11:09,admin,admin,
43,101760,4512,26072,6590,0,N,N,N,CP_Drtn,TT_Task,DT_FixedDUR2,TK_NotStart,JF721.365,Welding,,1336,0,56,0,0,0,56,0,0,0,,,,2013-03-06 09:00,2013-03-12 10:00,,2012-10-12 13:30,2012-10-18 12:00,2012-10-12 13:30,2012-10-18 12:00,2012-10-12 13:30,2012-10-18 12:00,2013-03-06 09:00,2013-03-12 10:00,,PT_Normal,,,,,nOcncG/DB0qBtXhSsYEntA,fKb7wQneJkSqokYzrd7Ntg,,,N,0,0,,,2013-11-05 11:09,2013-11-05 11:09,admin,admin,
44,101761,4512,26072,6590,0,N,N,N,CP_Drtn,TT_Task,DT_FixedDUR2,TK_NotStart,JF721.366,Blasting/Painting,,1336,0,56,0,0,0,56,0,0,0,,,,2013-03-12 10:00,2013-03-18 11:00,,2012-10-18 12:00,2012-10-24 13:00,2012-10-18 12:00,2012-10-24 13:00,2012-10-18 12:00,2012-10-24 13:00,2013-03-12 10:00,2013-03-18 11:00,,PT_Normal,,,,,CM6ov5m930uUExU8gxcGkQ,BwP2ymGIUU+c2fXN6sVgJg,,,N,0,0,,,2013-11-05 11:09,2013-11-05 11:09,admin,admin,
45,101762,4512,26072,6590,0,N,N,N,CP_Drtn,TT_Task,DT_FixedDUR2,TK_NotStart,JF721.367,Inspect & Accept for use,,1336,0,32,0,0,0,32,0,0,0,,,,2013-03-18 11:00,2013-03-21 13:00,,2012-10-24 13:00,2012-10-29 15:00,2012-10-24 13:00,2012-10-29 15:00,2012-10-24 13:00,2012-10-29 15:00,2013-03-18 11:00,2013-03-21 13:00,,PT_Normal,,,,,e4TxLWBzt0WfK+L8D3RHbg,o+wMiGtSoUKh2J48Anp8Dw,,,N,0,0,,,2013-11-05 11:09,2013-11-05 11:09,admin,admin,
46,101763,4512,26073,6590,0,N,N,N,CP_Drtn,TT_Task,DT_FixedDUR2,TK_NotStart,JF721.326,PO Issued,,480,0,24,0,0,0,24,0,0,0,,,,2012-09-03 08:00,2012-09-05 12:00,,2012-07-10 08:00,2012-07-12 12:00,2012-07-10 08:00,2012-07-12 12:00,2012-07-10 08:00,2012-07-12 12:00,2012-09-03 08:00,2012-09-05 12:00,,PT_Normal,,,,,8GQfg7cN3kacRT7kR0sKIQ,xMKajeOpB0i4h5bLtqRGTg,,,N,0,0,,,2013-11-05 11:09,2013-11-05 11:09,admin,admin,
47,101764,4512,26073,6590,0,N,N,N,CP_Drtn,TT_Task,DT_FixedDUR2,TK_NotStart,JF721.327,Ma'aden Site Delievery,,480,208,64,0,0,0,64,0,0,0,,,,2012-09-05 12:00,2012-09-12 11:00,,2012-07-12 12:00,2012-07-19 11:00,2012-07-12 12:00,2012-07-19 11:00,2012-07-12 12:00,2012-07-19 11:00,2012-09-05 12:00,2012-09-12 11:00,,PT_Normal,,,,,D20S4UKwpkOvnrg2AtdsUA,WxdmX0lSU0yS7+MyaW6J3A,,,N,0,0,,,2013-11-05 11:09,2013-11-05 11:09,admin,admin,
48,101765,4512,26115,6590,0,N,N,N,CP_Drtn,TT_Task,DT_FixedDUR2,TK_NotStart,JF721.368,"Annular,Bottom & Sump",,352,80,40,0,0,0,40,0,0,0,,,,2012-10-28 09:00,2012-11-01 09:00,,2012-09-18 12:00,2012-09-22 17:00,2012-09-18 12:00,2012-09-22 17:00,2012-09-18 12:00,2012-09-22 17:00,2012-10-28 09:00,2012-11-01 09:00,,PT_Normal,,,,,LI/kVgXxREyyrkFYingC9g,aL93bd7K20m30+6GK2mPUA,,,N,0,0,,,2013-11-05 11:09,2013-11-05 11:09,admin,admin,
49,101766,4512,26115,6590,0,N,N,N,CP_Drtn,TT_Task,DT_FixedDUR2,TK_NotStart,JF721.369,"Shell Courses #1,#2,#3,#4",,800,528,64,0,0,0,64,0,0,0,,,,2012-12-18 14:00,2012-12-25 13:00,,2012-09-22 09:00,2012-09-29 08:00,2012-09-22 09:00,2012-09-29 08:00,2012-09-22 09:00,2012-09-29 08:00,2012-12-18 14:00,2012-12-25 13:00,,PT_Normal,,,,,4irvQOVR4k2ZMqQEPz4c0g,mb+jkI/ywU6UywP62LUheA,,,N,0,0,,,2013-11-05 11:09,2013-11-05 11:09,admin,admin,
50,101767,4512,26115,6590,0,N,N,N,CP_Drtn,TT_Task,DT_FixedDUR2,TK_NotStart,JF721.370,Shell Nozzles & Manholes,,1200,928,48,0,0,0,48,0,0,0,,,,2013-02-06 13:00,2013-02-11 16:00,,2012-09-29 16:00,2012-10-04 14:00,2012-09-29 16:00,2012-10-04 14:00,2012-09-29 16:00,2012-10-04 14:00,2013-02-06 13:00,2013-02-11 16:00,,PT_Normal,,,,,6W742bH/KEmx/S2jf29JGw,bYPwWiI3GUaFTpFne1xHmA,,,N,0,0,,,2013-11-05 11:09,2013-11-05 11:09,admin,admin,
51,101768,4512,26115,6590,0,N,N,N,CP_Drtn,TT_Task,DT_FixedDUR2,TK_NotStart,JF721.371,"Platforms,Stairs & Handrails",,1336,1064,48,0,0,0,48,0,0,0,,,,2013-03-21 13:00,2013-03-26 16:00,,2012-10-29 15:00,2012-11-04 08:00,2012-10-29 15:00,2012-11-04 08:00,2012-10-29 15:00,2012-11-04 08:00,2013-03-21 13:00,2013-03-26 16:00,,PT_Normal,,,,,JAArtHZn4U+sSYTYSSoDYQ,dfbbgYeH70W47Yg9e8OhUw,,,N,0,0,,,2013-11-05 11:09,2013-11-05 11:09,admin,admin,
52,101769,4512,26115,6590,0,N,N,N,CP_Drtn,TT_Task,DT_FixedDUR2,TK_NotStart,JF721.372,Pipes & Fittings,,352,0,32,0,0,0,32,0,0,0,,,,2012-10-29 07:00,2012-11-01 09:00,,2012-09-19 10:00,2012-09-22 17:00,2012-09-19 10:00,2012-09-22 17:00,2012-09-19 10:00,2012-09-22 17:00,2012-10-29 07:00,2012-11-01 09:00,,PT_Normal,,,,,Jtqc12DB+ECecAIHQpSK2A,kpaaWoNQ0Ue6jietlQ5Z5Q,,,N,0,0,,,2013-11-05 11:09,2013-11-05 11:09,admin,admin,
53,101770,4512,26115,6590,0,N,N,N,CP_Drtn,TT_Task,DT_FixedDUR2,TK_NotStart,JF721.373,Aluminum Dome Roof,,1328,1056,736.016667,0,0,0,736.016667,0,0,0,,,,2013-01-14 12:00,2013-04-02 15:01,,2012-08-22 14:00,2012-11-11 15:01,2012-08-22 14:00,2012-11-11 15:01,2012-08-22 14:00,2012-11-11 15:01,2013-01-14 12:00,2013-04-02 15:01,,PT_Normal,,,,,wquGGi8jMkeATot9vXED0w,fvBVTZnUAEe8LmzFstdm6w,,,N,0,0,,,2013-11-05 11:09,2013-11-05 11:09,admin,admin,
54,101771,4512,26115,6590,0,N,N,N,CP_Drtn,TT_Task,DT_FixedDUR2,TK_NotStart,JF721.374,Paint Material,,680,328,32,0,0,0,32,0,0,0,,,,2012-10-29 07:00,2012-11-01 09:00,,2012-08-12 07:00,2012-08-15 09:00,2012-08-12 07:00,2012-08-15 09:00,2012-08-12 07:00,2012-08-15 09:00,2012-10-29 07:00,2012-11-01 09:00,,PT_Normal,,,,,ObgsxawGaEmE7lznsuBeMA,NMnPTBgk00ygxxX6Jhgwmg,,,N,0,0,,,2013-11-05 11:09,2013-11-05 11:09,admin,admin,
55,101772,4512,26075,6590,0,N,N,N,CP_Drtn,TT_FinMile,DT_FixedDrtn,TK_NotStart,3.5,"Material Requisition approval for Steel plates, Cathodic Protection, field instruments etc.",,352,0,0,0,0,0,0,0,0,0,,,,2012-09-06 10:00,2012-09-06 10:00,,2012-07-27 10:30,2012-07-27 10:30,2012-07-27 10:30,2012-07-27 10:30,2012-07-27 10:30,2012-07-27 10:30,2012-09-06 10:00,2012-09-06 10:00,,PT_Normal,,,,,2NaXrU3bpE6VUz0fzRiACQ,XHInUHFow0yLQJirCxHcjA,,,N,0,0,,,2013-11-05 11:09,2013-11-05 11:09,admin,admin,
56,101773,4512,26041,6590,0,N,N,N,CP_Drtn,TT_FinMile,DT_FixedDrtn,TK_NotStart,3.6,Purchase Order placement for Major Materials,,1328,0,0,0,0,0,0,0,0,0,,,,2013-01-14 12:00,2013-01-14 12:00,,2012-08-22 14:00,2012-08-22 14:00,2012-08-22 14:00,2012-08-22 14:00,2012-08-22 14:00,2012-08-22 14:00,2013-01-14 12:00,2013-01-14 12:00,,PT_Normal,,,,,YThpmUK1bUWK0FUOoCLqaQ,,,,N,0,0,,,2013-11-05 11:09,2013-11-05 11:09,admin,admin,
57,101774,4512,26055,6590,0,N,N,N,CP_Drtn,TT_FinMile,DT_FixedDrtn,TK_NotStart,3.11,Complete Installation of Cathodic Protection,,272,0,0,0,0,0,0,0,0,0,,,,2013-06-22 09:00,2013-06-22 09:00,,2013-05-23 12:00,2013-05-23 12:00,2013-05-23 12:00,2013-05-23 12:00,2013-05-23 12:00,2013-05-23 12:00,2013-06-22 09:00,2013-06-22 09:00,,PT_Normal,,,,,kDSxgkqKwkaV/UJWxpDJkA,,,,N,0,0,,,2013-11-05 11:09,2013-11-05 11:09,admin,admin,
58,101775,4512,26039,6590,0,N,N,N,CP_Drtn,TT_FinMile,DT_FixedDrtn,TK_NotStart,3.12,Complete Installation for instruments,,272,0,0,0,0,0,0,0,0,0,,,,2013-07-19 12:30,2013-07-19 12:30,,2013-06-20 08:00,2013-06-20 08:00,2013-06-20 08:00,2013-06-20 08:00,2013-06-20 08:00,2013-06-20 08:00,2013-07-19 12:30,2013-07-19 12:30,,PT_Normal,,,,,2XM/AlOw6UeVho4G8uPu5g,,,,N,0,0,,,2013-11-05 11:09,2013-11-05 11:09,admin,admin,
59,101776,4512,26043,6590,0,N,N,N,CP_Drtn,TT_FinMile,DT_FixedDrtn,TK_NotStart,3.8,Supply of materials to Site,,352,80,0,0,0,0,0,0,0,0,,,,2012-11-01 09:00,2012-11-01 09:00,,2012-09-22 17:00,2012-09-22 17:00,2012-09-22 17:00,2012-09-22 17:00,2012-09-22 17:00,2012-09-22 17:00,2012-11-01 09:00,2012-11-01 09:00,,PT_Normal,,,,,BaYTH6ss8EWvUgyZdYWBBA,,,,N,0,0,,,2013-11-05 11:09,2013-11-05 11:09,admin,admin,
60,101777,4512,26059,6590,0,N,N,N,CP_Drtn,TT_Task,DT_FixedDUR2,TK_NotStart,JF721.386,Erect & Weld Annular Plates,6942,272,0,120,0,1190,1190,120,420,0,420,,,,2012-11-01 09:00,2012-11-14 09:00,,2012-10-01 12:00,2012-10-14 12:00,2012-10-01 12:00,2012-10-14 12:00,2012-10-01 12:00,2012-10-14 12:00,2012-11-01 09:00,2012-11-14 09:00,,PT_Normal,,,,,DUtyFHo3mkauhxzMGJXiAQ,wAcsRKLcHkq/L3INr7lwpw,,,N,0,0,,,2013-11-05 11:09,2013-11-05 11:09,admin,admin,
61,101778,4512,26059,6590,0,N,N,N,CP_Drtn,TT_Task,DT_FixedDUR2,TK_NotStart,JF721.387,Erect & Tack Bottom Plates,6951,272,0,160,0,900,900,160,300,0,300,,,,2012-11-14 09:00,2012-12-01 14:00,,2012-10-14 12:00,2012-11-01 17:00,2012-10-14 12:00,2012-11-01 17:00,2012-10-14 12:00,2012-11-01 17:00,2012-11-14 09:00,2012-12-01 14:00,,PT_Normal,,,,,xI5B7XCZt0aBaVTo9Cf75g,110SImtgt0aH/kqL4icYqg,,,N,0,0,,,2013-11-05 11:09,2013-11-05 11:09,admin,admin,
62,101779,4512,26059,6590,0,N,N,N,CP_Drtn,TT_Task,DT_FixedDUR2,TK_NotStart,JF721.388,Welding of Bottom Plates,6968,272,0,200,0,980,980,200,630,0,630,,,,2012-12-01 14:00,2012-12-23 09:00,,2012-11-02 09:30,2012-11-23 14:30,2012-11-02 09:30,2012-11-23 14:30,2012-11-02 09:30,2012-11-23 14:30,2012-12-01 14:00,2012-12-23 09:00,,PT_Normal,,,,,Zz0uao7fGkCGk2UaSqltxw,zWD8t9dWWk6r42mM7S9ODg,,,N,0,0,,,2013-11-05 11:09,2013-11-05 11:09,admin,admin,
63,101780,4512,26059,6590,0,N,N,N,CP_Drtn,TT_Task,DT_FixedDUR2,TK_NotStart,JF721.389,Visual Inspection & Cleaning,6935,272,0,16,0,70,70,16,20,0,20,,,,2012-12-23 09:00,2012-12-24 15:00,,2012-11-24 07:00,2012-11-25 13:00,2012-11-24 07:00,2012-11-25 13:00,2012-11-24 07:00,2012-11-25 13:00,2012-12-23 09:00,2012-12-24 15:00,,PT_Normal,,,,,FZuyX+4o+0O2wJfLcODoWQ,stTKlzl250O8vdnn2608yQ,,,N,0,0,,,2013-11-05 11:09,2013-11-05 11:09,admin,admin,
64,101781,4512,26059,6590,0,N,N,N,CP_Drtn,TT_Task,DT_FixedDUR2,TK_NotStart,JF721.390,Carry Out NDT & Vaccuum Box Test,6935,272,0,24,0,180,180,24,40,0,40,,,,2012-12-24 15:00,2012-12-27 09:00,,2012-11-25 13:00,2012-11-27 17:00,2012-11-25 13:00,2012-11-27 17:00,2012-11-25 13:00,2012-11-27 17:00,2012-12-24 15:00,2012-12-27 09:00,,PT_Normal,,,,,PAj7Z2HVt0KZWTnRZRImNg,TJThdccDb02ykkVKXx6c/Q,,,N,0,0,,,2013-11-05 11:09,2013-11-05 11:09,admin,admin,
65,101782,4512,26060,6590,0,N,N,N,CP_Drtn,TT_Task,DT_FixedDUR2,TK_NotStart,JF721.391,Prepare Shell Course # 1 for Erection,6951,272,0,32,0,190,190,32,60,0,60,,,,2012-12-25 13:00,2012-12-29 10:00,,2012-11-26 11:00,2012-11-29 13:00,2012-11-26 11:00,2012-11-29 13:00,2012-11-26 11:00,2012-11-29 13:00,2012-12-25 13:00,2012-12-29 10:00,,PT_Normal,,,,,x3yzryMBI0OFvgHgS0QV4g,XgtPMJGhUk+gdCHLmZFEXA,,,N,0,0,,,2013-11-05 11:09,2013-11-05 11:09,admin,admin,
66,101783,4512,26060,6590,0,N,N,N,CP_Drtn,TT_Task,DT_FixedDUR2,TK_NotStart,JF721.392,Erect & Tack Shell Course # 1,6951,272,0,40,0,360,360,40,120,0,120,,,,2012-12-29 10:00,2013-01-02 10:00,,2012-11-29 13:00,2012-12-04 08:00,2012-11-29 13:00,2012-12-04 08:00,2012-11-29 13:00,2012-12-04 08:00,2012-12-29 10:00,2013-01-02 10:00,,PT_Normal,,,,,u9J3FzIz3UuJIe6YjBrdaA,lYIICyevK0KWhlRfcxgE9Q,,,N,0,0,,,2013-11-05 11:09,2013-11-05 11:09,admin,admin,
67,101784,4512,26060,6590,0,N,N,N,CP_Drtn,TT_Task,DT_FixedDUR2,TK_NotStart,JF721.393,Weld Outer Vertical Seam,6942,272,0,40,0,400,400,40,220,0,220,,,,2012-12-30 08:00,2013-01-03 08:00,,2012-11-30 13:30,2012-12-04 16:00,2012-11-30 13:30,2012-12-04 16:00,2012-11-30 13:30,2012-12-04 16:00,2012-12-30 08:00,2013-01-03 08:00,,PT_Normal,,,,,uSxZpbYW6EG22sS7PkGYeg,QZ+VUGcZFEqSWYekOyWirA,,,N,0,0,,,2013-11-05 11:09,2013-11-05 11:09,admin,admin,
68,101785,4512,26060,6590,0,N,N,N,CP_Drtn,TT_Task,DT_FixedDUR2,TK_NotStart,JF721.394,Backgouge & NDT Inside Vertical Seam,6965,272,0,40,0,200,200,40,40,0,40,,,,2012-12-30 16:00,2013-01-03 16:00,,2012-12-01 14:00,2012-12-05 14:00,2012-12-01 14:00,2012-12-05 14:00,2012-12-01 14:00,2012-12-05 14:00,2012-12-30 16:00,2013-01-03 16:00,,PT_Normal,,,,,WqajHkQIaEG18W0nm+FLbg,Oquglvz0g0+sTQlwVp+Mfg,,,N,0,0,,,2013-11-05 11:09,2013-11-05 11:09,admin,admin,
69,101786,4512,26060,6590,0,N,N,N,CP_Drtn,TT_Task,DT_FixedDUR2,TK_NotStart,JF721.395,Weld Inside Vertical Seam,6968,272,0,40,0,400,400,40,260,0,260,,,,2012-12-31 14:00,2013-01-05 09:00,,2012-12-02 12:00,2012-12-06 12:00,2012-12-02 12:00,2012-12-06 12:00,2012-12-02 12:00,2012-12-06 12:00,2012-12-31 14:00,2013-01-05 09:00,,PT_Normal,,,,,tzKtSd6xf0uayNn4oq5iwQ,bNgvLtxoF0WK2nioT03ing,,,N,0,0,,,2013-11-05 11:09,2013-11-05 11:09,admin,admin,
70,101787,4512,26061,6590,0,N,N,N,CP_Drtn,TT_Task,DT_FixedDUR2,TK_NotStart,JF721.396,Prepare Shell Course # 2 for Erection,6951,272,0,32,0,180,180,32,30,0,30,,,,2013-01-02 10:00,2013-01-05 17:00,,2012-12-04 08:00,2012-12-07 12:30,2012-12-04 08:00,2012-12-07 12:30,2012-12-04 08:00,2012-12-07 12:30,2013-01-02 10:00,2013-01-05 17:00,,PT_Normal,,,,,D5L+iJUCQEy8mMJrLTbH0A,znGT1AiRzUexYVr8dhKCng,,,N,0,0,,,2013-11-05 11:09,2013-11-05 11:09,admin,admin,
71,101788,4512,26061,6590,0,N,N,N,CP_Drtn,TT_Task,DT_FixedDUR2,TK_NotStart,JF721.397,Erect & Tack Shell Course # 2,6951,272,0,40,0,400,400,40,120,0,120,,,,2013-01-06 07:00,2013-01-09 17:00,,2012-12-07 12:30,2012-12-11 15:00,2012-12-07 12:30,2012-12-11 15:00,2012-12-07 12:30,2012-12-11 15:00,2013-01-06 07:00,2013-01-09 17:00,,PT_Normal,,,,,JdyeYUMUY0utDXkL9X9iBw,S0FZWc0Rh0uCp9rpJu0UFw,,,N,0,0,,,2013-11-05 11:09,2013-11-05 11:09,admin,admin,
72,101789,4512,26061,6590,0,N,N,N,CP_Drtn,TT_Task,DT_FixedDUR2,TK_NotStart,JF721.398,Weld Outer Vertical Seam,6935,272,0,48,0,840,840,48,480,0,480,,,,2013-01-06 15:00,2013-01-12 08:00,,2012-12-08 13:00,2012-12-13 11:00,2012-12-08 13:00,2012-12-13 11:00,2012-12-08 13:00,2012-12-13 11:00,2013-01-06 15:00,2013-01-12 08:00,,PT_Normal,,,,,4iHL7JUYjUSZH5b40npd1g,02x2RGlq8UyrSQ1smyHvXA,,,N,0,0,,,2013-11-05 11:09,2013-11-05 11:09,admin,admin,
73,101790,4512,26061,6590,0,N,N,N,CP_Drtn,TT_Task,DT_FixedDUR2,TK_NotStart,JF721.399,Backgouge & NDT Inside Vertical Seam,6964,272,0,40,0,260,260,40,40,0,40,,,,2013-01-07 13:00,2013-01-12 08:00,,2012-12-09 11:00,2012-12-13 11:00,2012-12-09 11:00,2012-12-13 11:00,2012-12-09 11:00,2012-12-13 11:00,2013-01-07 13:00,2013-01-12 08:00,,PT_Normal,,,,,f8E2PFfGRk+36QqbJYnsLw,OTH2MBl8/0+b90QwPRl6HA,,,N,0,0,,,2013-11-05 11:09,2013-11-05 11:09,admin,admin,
74,101791,4512,26061,6590,0,N,N,N,CP_Drtn,TT_Task,DT_FixedDUR2,TK_NotStart,JF721.400,Weld Inside Vertical Seam,6935,272,0,40,0,540,540,40,340,0,340,,,,2013-01-08 11:00,2013-01-12 16:00,,2012-12-10 09:00,2012-12-14 11:30,2012-12-10 09:00,2012-12-14 11:30,2012-12-10 09:00,2012-12-14 11:30,2013-01-08 11:00,2013-01-12 16:00,,PT_Normal,,,,,Kxn/+4NY8k6Dy5bQqa43zQ,RfSppuVpEkauvhzPvVlSOQ,,,N,0,0,,,2013-11-05 11:09,2013-11-05 11:09,admin,admin,
75,101792,4512,26061,6590,0,N,N,N,CP_Drtn,TT_Task,DT_FixedDUR2,TK_NotStart,JF721.401,"""""Fit & Tack Horizontal Seam between Shell Course # 1 & 2""""",6942,272,0,40,0,340,340,40,120,0,120,,,,2013-01-09 09:00,2013-01-13 14:00,,2012-12-11 07:00,2012-12-15 12:00,2012-12-11 07:00,2012-12-15 12:00,2012-12-11 07:00,2012-12-15 12:00,2013-01-09 09:00,2013-01-13 14:00,,PT_Normal,,,,,v2HZYEiRU0m9YKy7cXl6Lw,i+siZMRFOEWWPhpzGgTm/A,,,N,0,0,,,2013-11-05 11:09,2013-11-05 11:09,admin,admin,
76,101793,4512,26061,6590,0,N,N,N,CP_Drtn,TT_Task,DT_FixedDUR2,TK_NotStart,JF721.402,"""""Weld Outer Horizontal Seam between Shell Course # 1 & 2""""",6942,272,0,56,0,920,920,56,520,0,520,,,,2013-01-10 07:00,2013-01-16 08:00,,2012-12-11 15:00,2012-12-17 16:00,2012-12-11 15:00,2012-12-17 16:00,2012-12-11 15:00,2012-12-17 16:00,2013-01-10 07:00,2013-01-16 08:00,,PT_Normal,,,,,NwXTV+Ukv0aNN6dqHHWMuw,nmGtj9Je2EqNDoqQVv1N1g,,,N,0,0,,,2013-11-05 11:09,2013-11-05 11:09,admin,admin,
77,101794,4512,26061,6590,0,N,N,N,CP_Drtn,TT_Task,DT_FixedDUR2,TK_NotStart,JF721.403,"""""Backgouge & NDT Inside Horizontal Seam between Shell Course# 1 & 2""""",6935,272,0,40,0,280,280,40,40,0,40,,,,2013-01-10 15:00,2013-01-15 10:00,,2012-12-12 13:00,2012-12-17 08:00,2012-12-12 13:00,2012-12-17 08:00,2012-12-12 13:00,2012-12-17 08:00,2013-01-10 15:00,2013-01-15 10:00,,PT_Normal,,,,,74NK0Z7+rkSG9L9yV0lApA,sy+IrWUhXkughQFX+iL5XA,,,N,0,0,,,2013-11-05 11:09,2013-11-05 11:09,admin,admin,
78,101795,4512,26061,6590,0,N,N,N,CP_Drtn,TT_Task,DT_FixedDUR2,TK_NotStart,JF721.404,"Weld Inner Horizontal Seam between Shell Course # 1 & 2""""",6935,272,0,40,0,440,440,40,220,0,220,,,,2013-01-12 08:00,2013-01-16 08:00,,2012-12-13 11:00,2012-12-17 16:00,2012-12-13 11:00,2012-12-17 16:00,2012-12-13 11:00,2012-12-17 16:00,2013-01-12 08:00,2013-01-16 08:00,,PT_Normal,,,,,nuvQHFPyVk+TcPnsrKuCmg,V2cmtQD/9kqksXaVitT7Pg,,,N,0,0,,,2013-11-05 11:09,2013-11-05 11:09,admin,admin,
79,101796,4512,26048,6590,0,N,N,N,CP_Drtn,TT_Task,DT_FixedDUR2,TK_NotStart,JF721.405,Prepare Shell Course # 3 for Erection,6942,272,0,32,0,180,180,32,30,0,30,,,,2013-01-12 08:00,2013-01-15 10:00,,2012-12-13 11:00,2012-12-17 08:00,2012-12-13 11:00,2012-12-17 08:00,2012-12-13 11:00,2012-12-17 08:00,2013-01-12 08:00,2013-01-15 10:00,,PT_Normal,,,,,A3CnTNXkMEuTt27Qev1xXg,0dF8XEJAR0um2y0CtZrHCA,,,N,0,0,,,2013-11-05 11:09,2013-11-05 11:09,admin,admin,
80,101797,4512,26048,6590,0,N,N,N,CP_Drtn,TT_Task,DT_FixedDUR2,TK_NotStart,JF721.406,Erect & Tack Shell Course # 3,6951,272,0,40,0,340,340,40,100,0,100,,,,2013-01-15 10:00,2013-01-19 15:00,,2012-12-17 08:00,2012-12-21 10:30,2012-12-17 08:00,2012-12-21 10:30,2012-12-17 08:00,2012-12-21 10:30,2013-01-15 10:00,2013-01-19 15:00,,PT_Normal,,,,,rgAAJsqNkkiYEibBelu4vw,zAQOLeothkewiBEgPtyU3w,,,N,0,0,,,2013-11-05 11:09,2013-11-05 11:09,admin,admin,
81,101798,4512,26048,6590,0,N,N,N,CP_Drtn,TT_Task,DT_FixedDUR2,TK_NotStart,JF721.407,Weld Outer Vertical Seam,6965,272,0,48,0,540,540,48,330,0,330,,,,2013-01-16 08:00,2013-01-21 11:00,,2012-12-17 16:00,2012-12-23 09:00,2012-12-17 16:00,2012-12-23 09:00,2012-12-17 16:00,2012-12-23 09:00,2013-01-16 08:00,2013-01-21 11:00,,PT_Normal,,,,,ZdSFEHpNpEKIM3Q67hlJCQ,vwMCXD/taEyiVqs1zuTkSg,,,N,0,0,,,2013-11-05 11:09,2013-11-05 11:09,admin,admin,
82,101799,4512,26048,6590,0,N,N,N,CP_Drtn,TT_Task,DT_FixedDUR2,TK_NotStart,JF721.408,Backgouge & NDT Inside Vertical Seam,6942,272,0,40,0,180,180,40,40,0,40,,,,2013-01-16 16:00,2013-01-21 11:00,,2012-12-18 14:00,2012-12-23 09:00,2012-12-18 14:00,2012-12-23 09:00,2012-12-18 14:00,2012-12-23 09:00,2013-01-16 16:00,2013-01-21 11:00,,PT_Normal,,,,,vtsuaVhyHEW2zt52hcL+tw,FkRXA7HHrUuzrqNxnnIPWQ,,,N,0,0,,,2013-11-05 11:09,2013-11-05 11:09,admin,admin,
83,101800,4512,26048,6590,0,N,N,N,CP_Drtn,TT_Task,DT_FixedDUR2,TK_NotStart,JF721.409,Weld Inside Vertical Seam,6942,272,0,40,0,360,360,40,220,0,220,,,,2013-01-17 14:00,2013-01-22 09:00,,2012-12-19 12:00,2012-12-23 17:00,2012-12-19 12:00,2012-12-23 17:00,2012-12-19 12:00,2012-12-23 17:00,2013-01-17 14:00,2013-01-22 09:00,,PT_Normal,,,,,1CH14thr+0azjsabREaPEQ,Z68p+vy+CEihIDlquyT8Bw,,,N,0,0,,,2013-11-05 11:09,2013-11-05 11:09,admin,admin,
84,101801,4512,26048,6590,0,N,N,N,CP_Drtn,TT_Task,DT_FixedDUR2,TK_NotStart,JF721.410,"""""Fit & Tack Horizontal Seam between Shell Course # 2 & 3""""",6942,272,0,40,0,260,260,40,80,0,80,,,,2013-01-19 07:00,2013-01-22 17:00,,2012-12-20 10:00,2012-12-24 15:00,2012-12-20 10:00,2012-12-24 15:00,2012-12-20 10:00,2012-12-24 15:00,2013-01-19 07:00,2013-01-22 17:00,,PT_Normal,,,,,mhgXBXupWkSMVCCwL+K8vg,yO4QpAPPZUm/ZuKMLUlwxA,,,N,0,0,,,2013-11-05 11:09,2013-11-05 11:09,admin,admin,
85,101802,4512,26048,6590,0,N,N,N,CP_Drtn,TT_Task,DT_FixedDUR2,TK_NotStart,JF721.411,"""""Weld Outer Horizontal Seam between Shell Course # 2 & 3""""",6942,272,0,56,0,720,720,56,440,0,440,,,,2013-01-19 15:00,2013-01-25 13:30,,2012-12-21 10:30,2012-12-27 09:00,2012-12-21 10:30,2012-12-27 09:00,2012-12-21 10:30,2012-12-27 09:00,2013-01-19 15:00,2013-01-25 13:30,,PT_Normal,,,,,/i5p1337A0eOf+yoABaFng,FqAnNlhx/Uaj83WHY9IKxg,,,N,0,0,,,2013-11-05 11:09,2013-11-05 11:09,admin,admin,
86,101803,4512,26048,6590,0,N,N,N,CP_Drtn,TT_Task,DT_FixedDUR2,TK_NotStart,JF721.412,"""""Backgouge & NDT Inside Horizontal Seam between Shell Course# 2 & 3""""",6942,272,0,40,0,180,180,40,40,0,40,,,,2013-01-20 13:00,2013-01-24 13:00,,2012-12-22 11:00,2012-12-26 11:00,2012-12-22 11:00,2012-12-26 11:00,2012-12-22 11:00,2012-12-26 11:00,2013-01-20 13:00,2013-01-24 13:00,,PT_Normal,,,,,vAn94ViL70+Z5M+u37s0oA,9YqBeljKO0qZKYRZnZ9kzA,,,N,0,0,,,2013-11-05 11:09,2013-11-05 11:09,admin,admin,
87,101804,4512,26048,6590,0,N,N,N,CP_Drtn,TT_Task,DT_FixedDUR2,TK_NotStart,JF721.413,"Weld Inner Horizontal Seam between Shell Course # 2 & 3""""",6942,272,0,40,0,320,320,40,220,0,220,,,,2013-01-21 11:00,2013-01-25 13:30,,2012-12-23 09:00,2012-12-27 09:00,2012-12-23 09:00,2012-12-27 09:00,2012-12-23 09:00,2012-12-27 09:00,2013-01-21 11:00,2013-01-25 13:30,,PT_Normal,,,,,9P5BxE2vaUOdAZussiA0Ig,AYzaOzcC+0SVspGFh3omtg,,,N,0,0,,,2013-11-05 11:09,2013-11-05 11:09,admin,admin,
88,101805,4512,26063,6590,0,N,N,N,CP_Drtn,TT_Task,DT_FixedDUR2,TK_NotStart,JF721.414,Prepare Shell Course # 4 for Erection,6942,272,0,32,0,130,130,32,30,0,30,,,,2013-01-25 13:30,2013-01-28 10:00,,2012-12-27 09:00,2012-12-30 16:00,2012-12-27 09:00,2012-12-30 16:00,2012-12-27 09:00,2012-12-30 16:00,2013-01-25 13:30,2013-01-28 10:00,,PT_Normal,,,,,8Xk2odtBwkiHRg6tizxVzQ,Bh8dUtSXV0e+Ksnyty3PvQ,,,N,0,0,,,2013-11-05 11:09,2013-11-05 11:09,admin,admin,
89,101806,4512,26063,6590,0,N,N,N,CP_Drtn,TT_Task,DT_FixedDUR2,TK_NotStart,JF721.415,Erect & Tack Shell Course # 4,6965,272,0,40,0,300,300,40,120,0,120,,,,2013-01-28 10:00,2013-02-01 12:30,,2012-12-30 16:00,2013-01-03 16:00,2012-12-30 16:00,2013-01-03 16:00,2012-12-30 16:00,2013-01-03 16:00,2013-01-28 10:00,2013-02-01 12:30,,PT_Normal,,,,,fvkYskJ53U+80yvoog2yKw,FnpgCCzPpk6P25YAzjb7FA,,,N,0,0,,,2013-11-05 11:09,2013-11-05 11:09,admin,admin,
90,101807,4512,26063,6590,0,N,N,N,CP_Drtn,TT_Task,DT_FixedDUR2,TK_NotStart,JF721.416,Weld Outer Vertical Seam,6942,272,0,48,0,570,570,48,330,0,330,,,,2013-01-29 08:00,2013-02-03 11:00,,2012-12-31 14:00,2013-01-05 17:00,2012-12-31 14:00,2013-01-05 17:00,2012-12-31 14:00,2013-01-05 17:00,2013-01-29 08:00,2013-02-03 11:00,,PT_Normal,,,,,Y/gryKmFK0i9SCLscSFIGg,5cVgI51C00+1j2h27EgbEw,,,N,0,0,,,2013-11-05 11:09,2013-11-05 11:09,admin,admin,
91,101808,4512,26063,6590,0,N,N,N,CP_Drtn,TT_Task,DT_FixedDUR2,TK_NotStart,JF721.417,Backgouge & NDT Inside Vertical Seam,6942,272,0,40,0,200,200,40,40,0,40,,,,2013-01-29 16:00,2013-02-03 11:00,,2013-01-01 12:00,2013-01-05 17:00,2013-01-01 12:00,2013-01-05 17:00,2013-01-01 12:00,2013-01-05 17:00,2013-01-29 16:00,2013-02-03 11:00,,PT_Normal,,,,,BjHASCa2OEaD+8bDjsLS5w,oNcenL9t7kmxM4cI6cnKHA,,,N,0,0,,,2013-11-05 11:09,2013-11-05 11:09,admin,admin,
92,101809,4512,26063,6590,0,N,N,N,CP_Drtn,TT_Task,DT_FixedDUR2,TK_NotStart,JF721.418,Weld Inside Vertical Seam,6935,272,0,40,0,360,360,40,220,0,220,,,,2013-01-30 14:00,2013-02-04 09:00,,2013-01-02 10:00,2013-01-06 15:00,2013-01-02 10:00,2013-01-06 15:00,2013-01-02 10:00,2013-01-06 15:00,2013-01-30 14:00,2013-02-04 09:00,,PT_Normal,,,,,0AOYEMBS+EWi7/wc2t/pKg,AOO+KXYiykWoBvXrHLTISg,,,N,0,0,,,2013-11-05 11:09,2013-11-05 11:09,admin,admin,
93,101810,4512,26063,6590,0,N,N,N,CP_Drtn,TT_Task,DT_FixedDUR2,TK_NotStart,JF721.419,"""""Fit & Tack Horizontal Seam between Shell Course # 3 & 4""""",6942,272,0,40,0,260,260,40,100,0,100,,,,2013-01-31 12:00,2013-02-04 17:00,,2013-01-03 08:00,2013-01-07 13:00,2013-01-03 08:00,2013-01-07 13:00,2013-01-03 08:00,2013-01-07 13:00,2013-01-31 12:00,2013-02-04 17:00,,PT_Normal,,,,,dD1DLC/4u0eYfp220QyPoA,f+uNhvTdY0W8iTmTyN0P+Q,,,N,0,0,,,2013-11-05 11:09,2013-11-05 11:09,admin,admin,
94,101811,4512,26063,6590,0,N,N,N,CP_Drtn,TT_Task,DT_FixedDUR2,TK_NotStart,JF721.420,Weld Outer Horizontal Seam between Shell Course # 3 & 4,6942,272,0,56,0,680,680,56,440,0,440,,,,2013-02-01 12:30,2013-02-07 11:00,,2013-01-03 16:00,2013-01-09 17:00,2013-01-03 16:00,2013-01-09 17:00,2013-01-03 16:00,2013-01-09 17:00,2013-02-01 12:30,2013-02-07 11:00,,PT_Normal,,,,,cD6y+zHktkmWRlCmKCl82w,a4866ZCB9k6LY3zXWAxauA,,,N,0,0,,,2013-11-05 11:09,2013-11-05 11:09,admin,admin,
95,101812,4512,26063,6590,0,N,N,N,CP_Drtn,TT_Task,DT_FixedDUR2,TK_NotStart,JF721.421,"""""Backgouge & NDT Inside Horizontal Seam between Shell Course# 3 & 4""""",6942,272,0,40,0,180,180,40,40,0,40,,,,2013-02-02 13:00,2013-02-06 13:00,,2013-01-05 09:00,2013-01-09 09:00,2013-01-05 09:00,2013-01-09 09:00,2013-01-05 09:00,2013-01-09 09:00,2013-02-02 13:00,2013-02-06 13:00,,PT_Normal,,,,,Q/Qva6i6aEWGhmytslaaSw,oDIcQgrhIE2BT2X6ZhNrdw,,,N,0,0,,,2013-11-05 11:09,2013-11-05 11:09,admin,admin,
96,101813,4512,26063,6590,0,N,N,N,CP_Drtn,TT_Task,DT_FixedDUR2,TK_NotStart,JF721.422,"Weld Inner Horizontal Seam between Shell Course # 3 & 4""""",6942,272,0,40,0,340,340,40,220,0,220,,,,2013-02-03 11:00,2013-02-07 11:00,,2013-01-06 07:00,2013-01-09 17:00,2013-01-06 07:00,2013-01-09 17:00,2013-01-06 07:00,2013-01-09 17:00,2013-02-03 11:00,2013-02-07 11:00,,PT_Normal,,,,,b+4ChkJBMUyECbzoimkCRg,IlZcypqrkkiT7vWvdYTU7Q,,,N,0,0,,,2013-11-05 11:09,2013-11-05 11:09,admin,admin,
97,101814,4512,26063,6590,0,N,N,N,CP_Drtn,TT_Task,DT_FixedDUR2,TK_NotStart,JF721.423,"Fit, Weld Shell Course # 1 Annular Plate & Oil Test",6964,464,192,72,0,1860,1860,72,1020,0,1020,,,,2013-01-25 13:30,2013-02-01 12:30,,2012-12-06 12:00,2012-12-14 11:30,2012-12-06 12:00,2012-12-14 11:30,2012-12-06 12:00,2012-12-14 11:30,2013-01-25 13:30,2013-02-01 12:30,,PT_Normal,,,,,YdcHPBApOkGBuk6vWj+shQ,Hd3Cw6x4qkutEzo1wLhJHQ,,,N,0,0,,,2013-11-05 11:09,2013-11-05 11:09,admin,admin,
98,101815,4512,26086,6590,0,N,N,N,CP_Drtn,TT_Task,DT_FixedDUR2,TK_NotStart,JF721.424,Erect & Tack Curve Angle,6942,272,0,40,0,220,220,40,100,0,100,,,,2013-02-07 11:00,2013-02-11 16:00,,2013-01-10 07:00,2013-01-14 12:00,2013-01-10 07:00,2013-01-14 12:00,2013-01-10 07:00,2013-01-14 12:00,2013-02-07 11:00,2013-02-11 16:00,,PT_Normal,,,,,9Z483/xXski49dNB+nuEsA,4LEEoOCuY0O9LxelhKylNA,,,N,0,0,,,2013-11-05 11:09,2013-11-05 11:09,admin,admin,
99,101816,4512,26086,6590,0,N,N,N,CP_Drtn,TT_Task,DT_FixedDUR2,TK_NotStart,JF721.425,Weld Curve Angle,6942,272,0,56,0,560,560,56,320,0,320,,,,2013-02-11 16:00,2013-02-17 17:00,,2013-01-14 12:00,2013-01-20 13:00,2013-01-14 12:00,2013-01-20 13:00,2013-01-14 12:00,2013-01-20 13:00,2013-02-11 16:00,2013-02-17 17:00,,PT_Normal,,,,,hMT18gUxNkGTQw0OY9xzAw,mDvr2ryoH02BSTFTlZLUXg,,,N,0,0,,,2013-11-05 11:09,2013-11-05 11:09,admin,admin,
100,101817,4512,26087,6590,0,N,N,N,CP_Drtn,TT_Task,DT_FixedDUR2,TK_NotStart,JF721.426,MArk & Cut Holes,6964,272,0,48,0,300,300,48,90,0,90,,,,2013-02-11 16:00,2013-02-17 09:00,,2013-01-14 12:00,2013-01-19 15:00,2013-01-14 12:00,2013-01-19 15:00,2013-01-14 12:00,2013-01-19 15:00,2013-02-11 16:00,2013-02-17 09:00,,PT_Normal,,,,,OVpuH2sYlUmo1R01FRZ+Ig,KIGGf/WnD0ed22oKzp2sxw,,,N,0,0,,,2013-11-05 11:09,2013-11-05 11:09,admin,admin,
101,101818,4512,26087,6590,0,N,N,N,CP_Drtn,TT_Task,DT_FixedDUR2,TK_NotStart,JF721.427,"Fit & Tack Manholes ,Nozzles on Shell",6958,272,0,40,0,180,180,40,80,0,80,,,,2013-02-12 14:00,2013-02-17 09:00,,2013-01-15 10:00,2013-01-19 15:00,2013-01-15 10:00,2013-01-19 15:00,2013-01-15 10:00,2013-01-19 15:00,2013-02-12 14:00,2013-02-17 09:00,,PT_Normal,,,,,FrLk39f8MkixWAH0wDmXgA,rBcnUlW/60y/LAaEBzsSMw,,,N,0,0,,,2013-11-05 11:09,2013-11-05 11:09,admin,admin,
102,101819,4512,26087,6590,0,N,N,N,CP_Drtn,TT_Task,DT_FixedDUR2,TK_NotStart,JF721.428,Weld MAnholes & Nozzles on shell,6968,272,0,40,0,280,280,40,210,0,210,,,,2013-02-13 12:00,2013-02-17 17:00,,2013-01-16 08:00,2013-01-20 13:00,2013-01-16 08:00,2013-01-20 13:00,2013-01-16 08:00,2013-01-20 13:00,2013-02-13 12:00,2013-02-17 17:00,,PT_Normal,,,,,oecm1z/R8UWGBbAvLvLDXg,0KCSGwJNKU+tT+/YmtgeGA,,,N,0,0,,,2013-11-05 11:09,2013-11-05 11:09,admin,admin,
103,101820,4512,26087,6590,0,N,N,N,CP_Drtn,TT_Task,DT_FixedDUR2,TK_NotStart,JF721.429,NDT on Manholes & Nozzles on shell,6964,272,0,32,0,70,70,32,20,0,20,,,,2013-02-18 07:00,2013-02-21 09:00,,2013-01-20 13:00,2013-01-23 15:00,2013-01-20 13:00,2013-01-23 15:00,2013-01-20 13:00,2013-01-23 15:00,2013-02-18 07:00,2013-02-21 09:00,,PT_Normal,,,,,A/pGT2Y5k0u+YdEKW41K9g,8EilY1U3706EfnCqsOoftw,,,N,0,0,,,2013-11-05 11:09,2013-11-05 11:09,admin,admin,
104,101821,4512,26047,6590,0,N,N,N,CP_Drtn,TT_Task,DT_FixedDUR2,TK_NotStart,JF721.430,Prepare Tank for Roof Contruction,6914,272,0,40,0,276,276,40,60,0,60,,,,2013-02-21 09:00,2013-02-25 14:00,,2013-01-23 15:00,2013-01-27 19:00,2013-01-23 15:00,2013-01-27 19:00,2013-01-23 15:00,2013-01-27 19:00,2013-02-21 09:00,2013-02-25 14:00,,PT_Normal,,,,,pzsVi1nZaUOLwXHvUUOGhQ,lRS00tchZkqxfqnwTzxvGA,,,N,0,0,,,2013-11-05 11:09,2013-11-05 11:09,admin,admin,
105,101822,4512,26047,6590,0,N,N,N,CP_Drtn,TT_Task,DT_FixedDUR2,TK_NotStart,JF721.431,Install Shoe Support Structure on Shell,6964,272,0,56,0,700,700,56,240,0,240,,,,2013-02-25 14:00,2013-03-03 15:00,,2013-01-27 19:00,2013-02-02 13:00,2013-01-27 19:00,2013-02-02 13:00,2013-01-27 19:00,2013-02-02 13:00,2013-02-25 14:00,2013-03-03 15:00,,PT_Normal,,,,,QSMuDotwmUGU0liBlVGheg,PbQ/co29dU+izHYm3twr6w,,,N,0,0,,,2013-11-05 11:09,2013-11-05 11:09,admin,admin,
106,101823,4512,26047,6590,0,N,N,N,CP_Drtn,TT_Task,DT_FixedDUR2,TK_NotStart,JF721.432,Install / Assemble Roof Rafters,6951,272,0,104,0,1600,1600,104,300,0,300,,,,2013-03-03 15:00,2013-03-14 14:00,,2013-02-02 13:00,2013-02-13 12:00,2013-02-02 13:00,2013-02-13 12:00,2013-02-02 13:00,2013-02-13 12:00,2013-03-03 15:00,2013-03-14 14:00,,PT_Normal,,,,,wiGMaNIvnkC+bavsFIMrFA,iIFBqAUwnkSEFCiOSVgkJQ,,,N,0,0,,,2013-11-05 11:09,2013-11-05 11:09,admin,admin,
107,101824,4512,26047,6590,0,N,N,N,CP_Drtn,TT_Task,DT_FixedDUR2,TK_NotStart,JF721.433,Installation of Roof Plates,6914,272,0,72,0,900,900,72,180,0,180,,,,2013-03-14 14:00,2013-03-22 13:30,,2013-02-13 12:00,2013-02-21 09:00,2013-02-13 12:00,2013-02-21 09:00,2013-02-13 12:00,2013-02-21 09:00,2013-03-14 14:00,2013-03-22 13:30,,PT_Normal,,,,,2lCL96ZIr0mdRXOL8eGDVw,AzMvPn6voEGP9yR3lyt++Q,,,N,0,0,,,2013-11-05 11:09,2013-11-05 11:09,admin,admin,
108,101825,4512,26047,6590,0,N,N,N,CP_Drtn,TT_Task,DT_FixedDUR2,TK_NotStart,JF721.434,Install Roof Manholes & Nozzles,6942,272,0,40,0,300,300,40,60,0,60,,,,2013-03-22 13:30,2013-03-26 16:00,,2013-02-21 09:00,2013-02-25 14:00,2013-02-21 09:00,2013-02-25 14:00,2013-02-21 09:00,2013-02-25 14:00,2013-03-22 13:30,2013-03-26 16:00,,PT_Normal,,,,,ZHpdMiGfVE215m4RaGM2ZQ,XyLBxpvVO02nLeXXA/6jWA,,,N,0,0,,,2013-11-05 11:09,2013-11-05 11:09,admin,admin,
109,101826,4512,26089,6590,0,N,N,N,CP_Drtn,TT_Task,DT_FixedDUR2,TK_NotStart,JF721.435,"Erect & Fix Stairs, Handrails & Platforms on Shell",6942,272,0,24,0,340,340,24,60,0,60,,,,2013-03-26 16:00,2013-03-29 12:30,,2013-02-25 14:00,2013-02-28 08:00,2013-02-25 14:00,2013-02-28 08:00,2013-02-25 14:00,2013-02-28 08:00,2013-03-26 16:00,2013-03-29 12:30,,PT_Normal,,,,,3hPpR+/ED0q/lo+G5S3mlQ,5EyPUwMeTEmEfhHgV6rOaQ,,,N,0,0,,,2013-11-05 11:09,2013-11-05 11:09,admin,admin,
110,101827,4512,26089,6590,0,N,N,N,CP_Drtn,TT_Task,DT_FixedDUR2,TK_NotStart,JF721.436,Erect & Fix Roof Platforms & Handrails,6942,272,0,32,0,510,510,32,90,0,90,,,,2013-03-26 16:00,2013-03-30 13:00,,2013-02-25 14:00,2013-02-28 16:00,2013-02-25 14:00,2013-02-28 16:00,2013-02-25 14:00,2013-02-28 16:00,2013-03-26 16:00,2013-03-30 13:00,,PT_Normal,,,,,i37Fnht8lUSqdnJS4Bt+Lw,Lb5PVGvsWk2o3r/VbRiomA,,,N,0,0,,,2013-11-05 11:09,2013-11-05 11:09,admin,admin,
111,101828,4512,26049,6590,0,N,N,N,CP_Drtn,TT_Task,DT_FixedDUR2,TK_NotStart,JF721.437,Install Blind Flanges,6965,272,0,16,0,150,150,16,20,0,20,,,,2013-03-30 13:00,2013-04-01 09:00,,2013-02-28 16:00,2013-03-02 17:00,2013-02-28 16:00,2013-03-02 17:00,2013-02-28 16:00,2013-03-02 17:00,2013-03-30 13:00,2013-04-01 09:00,,PT_Normal,,,,,k93gWecieEmbCwrMcptmCw,bansJdM3X0yoUVEYaMB/xw,,,N,0,0,,,2013-11-05 11:09,2013-11-05 11:09,admin,admin,
112,101829,4512,26049,6590,0,N,N,N,CP_Drtn,TT_Task,DT_FixedDUR2,TK_NotStart,JF721.438,Tank Water Filling,6965,272,0,176,0,2080,2080,176,780,0,780,,,,2013-04-01 09:00,2013-04-20 10:00,,2013-03-03 07:00,2013-03-21 13:00,2013-03-03 07:00,2013-03-21 13:00,2013-03-03 07:00,2013-03-21 13:00,2013-04-01 09:00,2013-04-20 10:00,,PT_Normal,,,,,keyZPoU9PUmHXnRAaVVeVg,Kh4mzvRJ7U6puAbF5H7xpQ,,,N,0,0,,,2013-11-05 11:09,2013-11-05 11:09,admin,admin,
113,101830,4512,26049,6590,0,N,N,N,CP_Drtn,TT_Task,DT_FixedDUR2,TK_NotStart,JF721.439,Hold Water for 48 Hours,6965,272,0,24,0,120,120,24,40,0,40,,,,2013-04-20 10:00,2013-04-22 14:00,,2013-03-21 13:00,2013-03-24 12:00,2013-03-21 13:00,2013-03-24 12:00,2013-03-21 13:00,2013-03-24 12:00,2013-04-20 10:00,2013-04-22 14:00,,PT_Normal,,,,,gU8nGrlK3EmFftefLbemmQ,Hztw/9W0LUmVyvntp0hYYQ,,,N,0,0,,,2013-11-05 11:09,2013-11-05 11:09,admin,admin,
114,101831,4512,26049,6590,0,N,N,N,CP_Drtn,TT_Task,DT_FixedDUR2,TK_NotStart,JF721.440,Drain Water from Tank,6965,360,0,32,0,1650,1650,32,300,0,300,,,,2013-05-02 07:00,2013-05-05 14:00,,2013-03-24 12:00,2013-03-27 14:00,2013-03-24 12:00,2013-03-27 14:00,2013-03-24 12:00,2013-03-27 14:00,2013-05-02 07:00,2013-05-05 14:00,,PT_Normal,,,,,NQaGyZUCVE+hsA5lWNDr7w,TICNOBkmHEGq2yaXZRVaLA,,,N,0,0,,,2013-11-05 11:09,2013-11-05 11:09,admin,admin,
115,101832,4512,26049,6590,0,N,N,N,CP_Drtn,TT_Task,DT_FixedDUR2,TK_NotStart,JF721.441,Clean & Dry Out Tank,6942,360,0,16,0,390,390,16,60,0,60,,,,2013-05-05 14:00,2013-05-07 10:00,,2013-03-27 14:00,2013-03-29 12:30,2013-03-27 14:00,2013-03-29 12:30,2013-03-27 14:00,2013-03-29 12:30,2013-05-05 14:00,2013-05-07 10:00,,PT_Normal,,,,,SUgWFq3QnUOdsZPVYgmNGw,U7W2RDXctU2pKuHyUnEDrg,,,N,0,0,,,2013-11-05 11:09,2013-11-05 11:09,admin,admin,
116,101833,4512,26050,6590,0,N,N,N,CP_Drtn,TT_Task,DT_FixedDUR2,TK_NotStart,JF721.442,Erect  Scafolding Outside Tank,6942,272,0,72,0,960,960,72,160,0,160,,,,2013-04-22 14:00,2013-04-30 11:00,,2013-03-24 12:00,2013-04-01 09:00,2013-03-24 12:00,2013-04-01 09:00,2013-03-24 12:00,2013-04-01 09:00,2013-04-22 14:00,2013-04-30 11:00,,PT_Normal,,,,,Xx6gPqgGA0Kk+5W8607y6A,NX0HJySfA0ee8dax3nEcVw,,,N,0,0,,,2013-11-05 11:09,2013-11-05 11:09,admin,admin,
117,101834,4512,26050,6590,0,N,N,N,CP_Drtn,TT_Task,DT_FixedDUR2,TK_NotStart,JF721.443,External Shell Blast & Prime,6950,272,0,40,0,640,640,40,80,0,80,,,,2013-04-30 11:00,2013-05-04 16:00,,2013-04-01 09:00,2013-04-05 11:30,2013-04-01 09:00,2013-04-05 11:30,2013-04-01 09:00,2013-04-05 11:30,2013-04-30 11:00,2013-05-04 16:00,,PT_Normal,,,,,y2t7JTyUmkOIXfgG8xb/6A,pmfMQhFbCk2DnuEWFOOGgw,,,N,0,0,,,2013-11-05 11:09,2013-11-05 11:09,admin,admin,
118,101835,4512,26050,6590,0,N,N,N,CP_Drtn,TT_Task,DT_FixedDUR2,TK_NotStart,JF721.444,External Shell Secondary & Final Coat,6965,272,0,40,0,600,600,40,80,0,80,,,,2013-05-01 09:00,2013-05-05 14:00,,2013-04-02 07:00,2013-04-06 12:00,2013-04-02 07:00,2013-04-06 12:00,2013-04-02 07:00,2013-04-06 12:00,2013-05-01 09:00,2013-05-05 14:00,,PT_Normal,,,,,wNCwQ+WNM0iIR9lE3nkNJw,LrXrl8VuZUKaDkTnCorn2w,,,N,0,0,,,2013-11-05 11:09,2013-11-05 11:09,admin,admin,
119,101836,4512,26050,6590,0,N,N,N,CP_Drtn,TT_Task,DT_FixedDUR2,TK_NotStart,JF721.445,External Shell Paint Inspection,6935,272,0,16,0,140,140,16,20,0,20,,,,2013-05-05 14:00,2013-05-07 10:00,,2013-04-06 12:00,2013-04-08 08:00,2013-04-06 12:00,2013-04-08 08:00,2013-04-06 12:00,2013-04-08 08:00,2013-05-05 14:00,2013-05-07 10:00,,PT_Normal,,,,,eyaHI3mFSUu0lOo6nsny9w,zNCSE9hsPU+w0PbWL4y0RQ,,,N,0,0,,,2013-11-05 11:09,2013-11-05 11:09,admin,admin,
120,101837,4512,26050,6590,0,N,N,N,CP_Drtn,TT_Task,DT_FixedDUR2,TK_NotStart,JF721.446,Dismantle External Scaffolding,6957,272,0,24,0,260,260,24,40,0,40,,,,2013-05-07 10:00,2013-05-09 14:00,,2013-04-08 08:00,2013-04-10 12:00,2013-04-08 08:00,2013-04-10 12:00,2013-04-08 08:00,2013-04-10 12:00,2013-05-07 10:00,2013-05-09 14:00,,PT_Normal,,,,,ue/fahiRaUSZlHus2Mt+sA,h8ZTaHGim0WHe47851X01g,,,N,0,0,,,2013-11-05 11:09,2013-11-05 11:09,admin,admin,
121,101838,4512,26051,6590,0,N,N,N,CP_Drtn,TT_Task,DT_FixedDUR2,TK_NotStart,JF721.447,Erect Scafolding Inside Tank,6942,360,88,56,0,980,980,56,120,0,120,,,,2013-05-07 10:00,2013-05-13 11:00,,2013-03-29 12:30,2013-04-04 11:00,2013-03-29 12:30,2013-04-04 11:00,2013-03-29 12:30,2013-04-04 11:00,2013-05-07 10:00,2013-05-13 11:00,,PT_Normal,,,,,TnUtr2kiRE+AUWOVw7FPaQ,vidy906DS0uiEq9Jcg/PUg,,,N,0,0,,,2013-11-05 11:09,2013-11-05 11:09,admin,admin,
122,101839,4512,26051,6590,0,N,N,N,CP_Drtn,TT_Task,DT_FixedDUR2,TK_NotStart,JF721.448,Internal Shell Blast & Prime,6949,272,0,32,0,420,420,32,60,0,60,,,,2013-05-09 14:00,2013-05-13 11:00,,2013-04-10 12:00,2013-04-14 09:00,2013-04-10 12:00,2013-04-14 09:00,2013-04-10 12:00,2013-04-14 09:00,2013-05-09 14:00,2013-05-13 11:00,,PT_Normal,,,,,riIDlBiDs0mdqErBpLbR7A,EcDxdvHaBEGzZrj34KuDLw,,,N,0,0,,,2013-11-05 11:09,2013-11-05 11:09,admin,admin,
123,101840,4512,26051,6590,0,N,N,N,CP_Drtn,TT_Task,DT_FixedDUR2,TK_NotStart,JF721.449,Internal Shell Secondary & Final Coat,6950,272,0,32,0,420,420,32,60,0,60,,,,2013-05-13 11:00,2013-05-16 13:00,,2013-04-14 09:00,2013-04-17 11:00,2013-04-14 09:00,2013-04-17 11:00,2013-04-14 09:00,2013-04-17 11:00,2013-05-13 11:00,2013-05-16 13:00,,PT_Normal,,,,,PTToFcKBVEaFVasqRDmoag,wZGqCHL8t0WnxIy/M/19Uw,,,N,0,0,,,2013-11-05 11:09,2013-11-05 11:09,admin,admin,
124,101841,4512,26051,6590,0,N,N,N,CP_Drtn,TT_Task,DT_FixedDUR2,TK_NotStart,JF721.450,Internal Shell Paint Inspection,6967,272,0,16,0,50,50,16,20,0,20,,,,2013-05-13 11:00,2013-05-14 17:00,,2013-04-14 09:00,2013-04-15 15:00,2013-04-14 09:00,2013-04-15 15:00,2013-04-14 09:00,2013-04-15 15:00,2013-05-13 11:00,2013-05-14 17:00,,PT_Normal,,,,,9u9P/swACUqgPlFBuLexJw,y9fO7Scg7E+e7C945Imudw,,,N,0,0,,,2013-11-05 11:09,2013-11-05 11:09,admin,admin,
125,101842,4512,26051,6590,0,N,N,N,CP_Drtn,TT_Task,DT_FixedDUR2,TK_NotStart,JF721.451,Dismantle Internal Scaffolding,6942,272,0,40,0,520,520,40,80,0,80,,,,2013-05-15 07:00,2013-05-19 12:00,,2013-04-15 15:00,2013-04-20 10:00,2013-04-15 15:00,2013-04-20 10:00,2013-04-15 15:00,2013-04-20 10:00,2013-05-15 07:00,2013-05-19 12:00,,PT_Normal,,,,,w9MxThft3Ee0tJouGrVM2Q,yu9LhqdEMkmwT1t857x5Tw,,,N,0,0,,,2013-11-05 11:09,2013-11-05 11:09,admin,admin,
126,101843,4512,26051,6590,0,N,N,N,CP_Drtn,TT_Task,DT_FixedDUR2,TK_NotStart,JF721.452,Bottom/Annular Plate Blast & Prime,6949,272,0,24,0,240,240,24,40,0,40,,,,2013-05-19 12:00,2013-05-21 16:00,,2013-04-20 10:00,2013-04-22 14:00,2013-04-20 10:00,2013-04-22 14:00,2013-04-20 10:00,2013-04-22 14:00,2013-05-19 12:00,2013-05-21 16:00,,PT_Normal,,,,,BsulDpNAnUChJ/mq1Titkg,DbN3WnOHDECoEhhms9W2Yg,,,N,0,0,,,2013-11-05 11:09,2013-11-05 11:09,admin,admin,
127,101844,4512,26051,6590,0,N,N,N,CP_Drtn,TT_Task,DT_FixedDUR2,TK_NotStart,JF721.453,Bottom/Annular Plate Secondary & Final Coat,6950,272,0,24,0,220,220,24,40,0,40,,,,2013-05-21 16:00,2013-05-24 12:30,,2013-04-22 14:00,2013-04-25 08:00,2013-04-22 14:00,2013-04-25 08:00,2013-04-22 14:00,2013-04-25 08:00,2013-05-21 16:00,2013-05-24 12:30,,PT_Normal,,,,,Gcw8lIGMlE2TL+X12wL/uA,5jQfhNzf/Uq3OARytNb6qw,,,N,0,0,,,2013-11-05 11:09,2013-11-05 11:09,admin,admin,
128,101845,4512,26051,6590,0,N,N,N,CP_Drtn,TT_Task,DT_FixedDUR2,TK_NotStart,JF721.454,Bottom/Annular Plate Paint Inspection,6942,272,0,16,0,50,50,16,20,0,20,,,,2013-05-24 12:30,2013-05-26 11:00,,2013-04-25 08:00,2013-04-27 09:00,2013-04-25 08:00,2013-04-27 09:00,2013-04-25 08:00,2013-04-27 09:00,2013-05-24 12:30,2013-05-26 11:00,,PT_Normal,,,,,G74EdeYeZkiP0F7To30GYA,t2L8aWgy5kSdkuqtYptyaw,,,N,0,0,,,2013-11-05 11:09,2013-11-05 11:09,admin,admin,
129,101846,4512,26052,6590,0,N,N,N,CP_Drtn,TT_Task,DT_FixedDUR2,TK_NotStart,JF721.455,Tanks lighting,6942,272,0,24,0,200,200,24,80,0,80,,,,2013-07-19 12:30,2013-07-22 09:00,,2013-06-20 08:00,2013-06-22 17:00,2013-06-20 08:00,2013-06-22 17:00,2013-06-20 08:00,2013-06-22 17:00,2013-07-19 12:30,2013-07-22 09:00,,PT_Normal,,,,,bsDqW/4At0yu4W0Kgj5x4w,7y5Qe1s210qmT+OEF38g9A,,,N,0,0,,,2013-11-05 11:09,2013-11-05 11:09,admin,admin,
130,101847,4512,26052,6590,0,N,N,N,CP_Drtn,TT_Task,DT_FixedDUR2,TK_NotStart,JF721.456,Tanks lighting  protection,6942,272,0,24,0,180,180,24,80,0,80,,,,2013-07-22 09:00,2013-07-24 13:00,,2013-06-23 07:00,2013-06-25 11:00,2013-06-23 07:00,2013-06-25 11:00,2013-06-23 07:00,2013-06-25 11:00,2013-07-22 09:00,2013-07-24 13:00,,PT_Normal,,,,,UxNBqB7YwUKA7v1CaDw8pA,DDo+Xv7R+k66PRF1lFqpDQ,,,N,0,0,,,2013-11-05 11:09,2013-11-05 11:09,admin,admin,
131,101848,4512,26052,6590,0,N,N,N,CP_Drtn,TT_Task,DT_FixedDUR2,TK_NotStart,JF721.457,Grounding system,6942,272,0,24,0,140,140,24,40,0,40,,,,2013-07-24 13:00,2013-07-27 12:00,,2013-06-25 11:00,2013-06-27 15:00,2013-06-25 11:00,2013-06-27 15:00,2013-06-25 11:00,2013-06-27 15:00,2013-07-24 13:00,2013-07-27 12:00,,PT_Normal,,,,,Y39coO9bUkeapT/pvpKVWg,AdBUkj8+oEi0Eo2JeQDOPQ,,,N,0,0,,,2013-11-05 11:09,2013-11-05 11:09,admin,admin,
132,101849,4512,26094,6590,0,N,N,N,CP_Drtn,TT_Task,DT_FixedDUR2,TK_NotStart,JF721.458,Concrete testing,6916,272,0,32,0,210,210,32,60,0,60,,,,2013-07-27 12:00,2013-07-30 14:00,,2013-06-27 15:00,2013-07-01 12:00,2013-06-27 15:00,2013-07-01 12:00,2013-06-27 15:00,2013-07-01 12:00,2013-07-27 12:00,2013-07-30 14:00,,PT_Normal,,,,,bC/1pwPOHU+OuTcfpez4dg,6ft2cTrvvkS3JbzQ3DAeBg,,,N,0,0,,,2013-11-05 11:09,2013-11-05 11:09,admin,admin,
133,101850,4512,26094,6590,0,N,N,N,CP_Drtn,TT_Task,DT_FixedDUR2,TK_NotStart,JF721.459,RT testing for the welding,6942,272,0,40,0,240,240,40,80,0,80,,,,2013-07-30 14:00,2013-08-04 09:00,,2013-07-01 12:00,2013-07-05 14:30,2013-07-01 12:00,2013-07-05 14:30,2013-07-01 12:00,2013-07-05 14:30,2013-07-30 14:00,2013-08-04 09:00,,PT_Normal,,,,,GeF1ZpNe+UGzt8DISsehfQ,Bc+toI8VmUGsp2SonmfYsg,,,N,0,0,,,2013-11-05 11:09,2013-11-05 11:09,admin,admin,
134,101851,4512,26094,6590,0,N,N,N,CP_Drtn,TT_Task,DT_FixedDUR2,TK_NotStart,JF721.460,Sand testing,6915,272,0,40,0,240,240,40,80,0,80,,,,2013-08-04 09:00,2013-08-08 09:00,,2013-07-06 07:00,2013-07-09 17:00,2013-07-06 07:00,2013-07-09 17:00,2013-07-06 07:00,2013-07-09 17:00,2013-08-04 09:00,2013-08-08 09:00,,PT_Normal,,,,,UIcmFVM1/Umr/FUJnlTOJQ,cFr8gK331kqMvYV03T5dHA,,,N,0,0,,,2013-11-05 11:09,2013-11-05 11:09,admin,admin,
135,101852,4512,26094,6590,0,N,N,N,CP_Drtn,TT_Task,DT_FixedDUR2,TK_NotStart,JF721.461,Tank Calibration,6965,272,0,24,0,140,140,24,40,0,40,,,,2013-08-08 09:00,2013-08-11 08:00,,2013-07-10 07:00,2013-07-12 13:30,2013-07-10 07:00,2013-07-12 13:30,2013-07-10 07:00,2013-07-12 13:30,2013-08-08 09:00,2013-08-11 08:00,,PT_Normal,,,,,jrciM9QVtEy0bg54HedBBQ,x7QmKf7CPEeCne+hTwDCMA,,,N,0,0,,,2013-11-05 11:09,2013-11-05 11:09,admin,admin,
136,101853,4512,26054,6590,0,N,N,N,CP_Drtn,TT_Task,DT_FixedDUR2,TK_NotStart,JF721.462,FInal Inspection & Hand over to client,6915,272,0,24,0,240,240,24,60,0,60,,,,2013-08-11 08:00,2013-08-13 12:00,,2013-07-12 13:30,2013-07-15 10:00,2013-07-12 13:30,2013-07-15 10:00,2013-07-12 13:30,2013-07-15 10:00,2013-08-11 08:00,2013-08-13 12:00,,PT_Normal,,,,,W7+QFLV06UWPrIS8VUwL7Q,I9JlI74c8UyY7wb7nq2A5Q,,,N,0,0,,,2013-11-05 11:09,2013-11-05 11:09,admin,admin,
137,101854,4512,26074,6590,0,N,N,N,CP_Drtn,TT_Task,DT_FixedDUR2,TK_NotStart,JF721.375,Rental For Workers & Engineers Accomodation with Facilities,6915,272,0,40,0,240,240,40,160,0,160,,,,2012-08-02 09:00,2012-08-06 14:00,,2012-07-04 07:00,2012-07-08 12:00,2012-07-04 07:00,2012-07-08 12:00,2012-07-04 07:00,2012-07-08 12:00,2012-08-02 09:00,2012-08-06 14:00,,PT_Normal,,,,,4m5P86Z2GE+RjZ/sLjWmSA,HrSgeaSbv0CSiWrOgcgh6Q,,,N,0,0,,,2013-11-05 11:09,2013-11-05 11:09,admin,admin,
138,101855,4512,26074,6590,0,N,N,N,CP_Drtn,TT_Task,DT_FixedDUR2,TK_NotStart,JF721.377,Ma'aden Inspection & Approval for Portacabins,6915,272,0,16,0,60,60,16,40,0,40,,,,2012-08-27 09:00,2012-08-28 15:00,,2012-07-25 12:00,2012-07-27 10:30,2012-07-25 12:00,2012-07-27 10:30,2012-07-25 12:00,2012-07-27 10:30,2012-08-27 09:00,2012-08-28 15:00,,PT_Normal,,,,,4NOnb7XaFk+UEzl31JWaYQ,gfOjc+CVD02J1vIWbNmX4Q,,,N,0,0,,,2013-11-05 11:09,2013-11-05 11:09,admin,admin,
139,101856,4512,26074,6590,0,N,N,N,CP_Drtn,TT_Task,DT_FixedDUR2,TK_NotStart,JF721.376,Complete Mobilize AZ Equipment to Site & Prepare the site fabrication yard,6951,272,0,200,0,1680,1680,200,960,0,960,,,,2012-08-02 09:00,2012-08-27 09:00,,2012-07-04 07:00,2012-07-25 12:00,2012-07-04 07:00,2012-07-25 12:00,2012-07-04 07:00,2012-07-25 12:00,2012-08-02 09:00,2012-08-27 09:00,,PT_Normal,,,,,YGuSoFMo6kGhzyisY9L1lA,MMvSbrC2QkyGClDJyH1uJQ,,,N,0,0,,,2013-11-05 11:09,2013-11-05 11:09,admin,admin,
140,101857,4512,26056,6590,0,N,N,N,CP_Drtn,TT_Task,DT_FixedDUR2,TK_NotStart,JF721.378,Layout/Stake-out,6942,272,0,24,0,240,240,24,80,0,80,,,,2012-08-28 15:00,2012-08-31 11:30,,2012-07-27 10:30,2012-07-29 17:00,2012-07-27 10:30,2012-07-29 17:00,2012-07-27 10:30,2012-07-29 17:00,2012-08-28 15:00,2012-08-31 11:30,,PT_Normal,,,,,5xfapIMZUEqYu+DQn/BQVQ,zEeV7AYxDU6oxVE21A97rA,,,N,0,0,,,2013-11-05 11:09,2013-11-05 11:09,admin,admin,
141,101858,4512,26056,6590,0,N,N,N,CP_Drtn,TT_Task,DT_FixedDUR2,TK_NotStart,JF721.379,Excavation,6942,272,0,128,0,1950,1950,128,750,0,750,,,,2012-08-29 13:00,2012-09-12 11:00,,2012-07-28 11:00,2012-08-11 09:00,2012-07-28 11:00,2012-08-11 09:00,2012-07-28 11:00,2012-08-11 09:00,2012-08-29 13:00,2012-09-12 11:00,,PT_Normal,,,,,6jnBv3KAJ0GOnS5Ofr6cKA,A40lJUmBtky36sGaQyLSlg,,,N,0,0,,,2013-11-05 11:09,2013-11-05 11:09,admin,admin,
142,101859,4512,26056,6590,0,N,N,N,CP_Drtn,TT_Task,DT_FixedDUR2,TK_NotStart,JF721.380,SteelWorks/Formworks,6980,272,0,88,0,1400,1400,88,400,0,400,,,,2012-09-12 11:00,2012-09-22 09:00,,2012-08-11 09:00,2012-08-23 12:00,2012-08-11 09:00,2012-08-23 12:00,2012-08-11 09:00,2012-08-23 12:00,2012-09-12 11:00,2012-09-22 09:00,,PT_Normal,,,,,LJVQa0Vr8kS5rxNUghw2cA,OqdqJmCL+EKcmdEpK9P4sA,,,N,0,0,,,2013-11-05 11:09,2013-11-05 11:09,admin,admin,
143,101860,4512,26056,6590,0,N,N,N,CP_Drtn,TT_Task,DT_FixedDUR2,TK_NotStart,JF721.381,Soil Compaction,6965,272,0,88,0,900,900,88,500,0,500,,,,2012-09-22 09:00,2012-10-01 12:00,,2012-08-23 12:00,2012-09-02 10:00,2012-08-23 12:00,2012-09-02 10:00,2012-08-23 12:00,2012-09-02 10:00,2012-09-22 09:00,2012-10-01 12:00,,PT_Normal,,,,,4AJVwPXRUEKreIPiwqRKXw,Fw1ZJ+kPUUypXcJsWVdREg,,,N,0,0,,,2013-11-05 11:09,2013-11-05 11:09,admin,admin,
144,101861,4512,26057,6590,0,N,N,N,CP_Drtn,TT_Task,DT_FixedDUR2,TK_NotStart,JF721.382,Concrete Pouring,6951,272,0,48,0,600,600,48,158,0,158,,,,2012-10-01 12:00,2012-10-06 15:00,,2012-09-02 10:00,2012-09-07 10:30,2012-09-02 10:00,2012-09-07 10:30,2012-09-02 10:00,2012-09-07 10:30,2012-10-01 12:00,2012-10-06 15:00,,PT_Normal,,,,,FjSvJhgnikqlEkvhtF5NRQ,IS4vCyzVkEaBdYQLzRNHwA,,,N,0,0,,,2013-11-05 11:09,2013-11-05 11:09,admin,admin,
145,101862,4512,26057,6590,0,N,N,N,CP_Drtn,TT_Task,DT_FixedDUR2,TK_NotStart,JF721.383,Concrete Curing,6965,272,0,24,0,220,220,24,80,0,80,,,,2012-10-06 15:00,2012-10-09 09:00,,2012-09-07 10:30,2012-09-09 17:00,2012-09-07 10:30,2012-09-09 17:00,2012-09-07 10:30,2012-09-09 17:00,2012-10-06 15:00,2012-10-09 09:00,,PT_Normal,,,,,gi84ZysS3UCmoWsRmMZeWQ,1YEsaRCpGkWH2OpUJiN/cQ,,,N,0,0,,,2013-11-05 11:09,2013-11-05 11:09,admin,admin,
146,101863,4512,26057,6590,0,N,N,N,CP_Drtn,TT_Task,DT_FixedDUR2,TK_NotStart,JF721.384,Removal of Formworks,6951,272,0,88,0,1100,1100,88,400,0,400,,,,2012-10-09 09:00,2012-10-18 12:00,,2012-09-10 07:00,2012-09-19 10:00,2012-09-10 07:00,2012-09-19 10:00,2012-09-10 07:00,2012-09-19 10:00,2012-10-09 09:00,2012-10-18 12:00,,PT_Normal,,,,,gsmkp7Ic10qKoovbv7pGTg,M6QYgC4jbUu+Pmc6mpXdDQ,,,N,0,0,,,2013-11-05 11:09,2013-11-05 11:09,admin,admin,
147,101864,4512,26057,6590,0,N,N,N,CP_Drtn,TT_Task,DT_FixedDUR2,TK_NotStart,JF721.385,Backfilling,6965,272,0,112,0,1560,1560,112,650,0,650,,,,2012-10-18 12:00,2012-11-01 09:00,,2012-09-19 10:00,2012-10-01 12:00,2012-09-19 10:00,2012-10-01 12:00,2012-09-19 10:00,2012-10-01 12:00,2012-10-18 12:00,2012-11-01 09:00,,PT_Normal,,,,,JvH2Yll83kmN9+W8NIHuVA,3eyz/V5xikmiPeysCYtyww,,,N,0,0,,,2013-11-05 11:09,2013-11-05 11:09,admin,admin,
148,101865,4512,26058,6590,0,N,N,N,CP_Drtn,TT_FinMile,DT_FixedDrtn,TK_NotStart,3.7,Complete MOBILIZATION of camp with Catering and accommodation facilities,,272,0,0,0,0,0,0,0,0,0,,,,2012-08-28 15:00,2012-08-28 15:00,,2012-07-27 10:30,2012-07-27 10:30,2012-07-27 10:30,2012-07-27 10:30,2012-07-27 10:30,2012-07-27 10:30,2012-08-28 15:00,2012-08-28 15:00,,PT_Normal,,,,,WJfcBbxkGEylv6qrVt/nWg,,,,N,0,0,,,2013-11-05 11:09,2013-11-05 11:09,admin,admin,
149,101866,4512,26100,6590,0,N,N,N,CP_Drtn,TT_FinMile,DT_FixedDrtn,TK_NotStart,3.9,Complete COnstruction of Civil/Structural works,,272,0,0,0,0,0,0,0,0,0,,,,2012-11-01 09:00,2012-11-01 09:00,,2012-10-01 12:00,2012-10-01 12:00,2012-10-01 12:00,2012-10-01 12:00,2012-10-01 12:00,2012-10-01 12:00,2012-11-01 09:00,2012-11-01 09:00,,PT_Normal,,,,,pL77VMleCkahN3SuKWo4mA,,,,N,0,0,,,2013-11-05 11:09,2013-11-05 11:09,admin,admin,
150,101867,4512,26183,6590,0,N,N,N,CP_Drtn,TT_FinMile,DT_FixedDrtn,TK_NotStart,4.C,Final Testing,,360,0,0,0,0,0,0,0,0,0,,,,2013-05-07 10:00,2013-05-07 10:00,,2013-03-29 12:30,2013-03-29 12:30,2013-03-29 12:30,2013-03-29 12:30,2013-03-29 12:30,2013-03-29 12:30,2013-05-07 10:00,2013-05-07 10:00,,PT_Normal,,,,,3Ew/quzocke/Dm+qBj4eEw,,,,N,0,0,,,2013-11-05 11:09,2013-11-05 11:09,admin,admin,
151,101868,4512,26102,6590,0,N,N,N,CP_Drtn,TT_FinMile,DT_FixedDrtn,TK_NotStart,3.10,Complete Installation,,272,0,0,0,0,0,0,0,0,0,,,,2013-07-27 12:00,2013-07-27 12:00,,2013-06-27 15:00,2013-06-27 15:00,2013-06-27 15:00,2013-06-27 15:00,2013-06-27 15:00,2013-06-27 15:00,2013-07-27 12:00,2013-07-27 12:00,,PT_Normal,,,,,hSEmaBZJEU+tbB6i26e7dQ,,,,N,0,0,,,2013-11-05 11:09,2013-11-05 11:09,admin,admin,
152,101869,4512,26062,6590,0,N,N,N,CP_Drtn,TT_FinMile,DT_FixedDrtn,TK_NotStart,3.C,Third Party Testing,,272,0,0,0,0,0,0,0,0,0,,,,2013-08-11 08:00,2013-08-11 08:00,,2013-07-12 13:30,2013-07-12 13:30,2013-07-12 13:30,2013-07-12 13:30,2013-07-12 13:30,2013-07-12 13:30,2013-08-11 08:00,2013-08-11 08:00,,PT_Normal,,,,,msUat+g//Eap74bjRTw7Gg,,,,N,0,0,,,2013-11-05 11:09,2013-11-05 11:09,admin,admin,
153,101870,4512,26082,6590,0,N,N,N,CP_Drtn,TT_FinMile,DT_FixedDrtn,TK_NotStart,6.C,Project Completion,,272,232,0,0,0,0,0,0,0,0,,,,2013-08-13 12:00,2013-08-13 12:00,,2013-07-15 10:00,2013-07-15 10:00,2013-07-15 10:00,2013-07-15 10:00,2013-07-15 10:00,2013-07-15 10:00,2013-08-13 12:00,2013-08-13 12:00,,PT_Normal,,,,,P951OqwKDEaNaN8QcXzHnw,,,,N,0,0,,,2013-11-05 11:09,2013-11-05 11:09,admin,admin,
154,101871,4512,26064,6590,0,N,N,N,CP_Drtn,TT_FinMile,DT_FixedDrtn,TK_NotStart,2.C,MCC,,272,0,0,0,0,0,0,0,0,0,,,,2013-03-30 13:00,2013-03-30 13:00,,2013-02-28 16:00,2013-02-28 16:00,2013-02-28 16:00,2013-02-28 16:00,2013-02-28 16:00,2013-02-28 16:00,2013-03-30 13:00,2013-03-30 13:00,,PT_Normal,,,,,jPwXFrtGEkeYVMcISRc1ng,,,,N,0,0,,,2013-11-05 11:09,2013-11-05 11:09,admin,admin,
155,101872,4512,26066,6590,0,N,N,N,CP_Drtn,TT_Task,DT_FixedDrtn,TK_NotStart,JF721.309,Soil Investigation Works,6911,0,0,16,0,20,20,16,0,0,0,,,,2012-06-30 07:00,2012-07-01 13:00,,2012-06-30 07:00,2012-07-01 13:00,2012-06-30 07:00,2012-07-01 13:00,2012-06-30 07:00,2012-07-01 13:00,2012-06-30 07:00,2012-07-01 13:00,,PT_Normal,,,,,p8trd+R4BUGTFAZ3DHN/7Q,tilj/BgtPUyImT3a3vjOZA,,,Y,0,0,,,2013-11-05 11:09,2013-11-05 11:09,admin,admin,
156,101873,4512,26108,6590,0,N,N,N,CP_Drtn,TT_Task,DT_FixedDUR2,TK_NotStart,JF721.310,60% Submittal,6917,352,0,8,0,8,8,8,0,0,0,,,,2012-08-08 10:00,2012-08-09 08:00,,2012-07-01 13:00,2012-07-02 11:00,2012-07-01 13:00,2012-07-02 11:00,2012-07-01 13:00,2012-07-02 11:00,2012-08-08 10:00,2012-08-09 08:00,,PT_Normal,,,,,ApsKOJZq5kaACcW1s6dDHQ,kuI23ko2K06nGh7pYlYbPw,,,N,0,0,,,2013-11-05 11:09,2013-11-05 11:09,admin,admin,
157,101874,4512,26108,6590,0,N,N,N,CP_Drtn,TT_Task,DT_FixedDUR2,TK_NotStart,JF721.311,60% Comments Incooperation,6917,352,0,56,0,56,56,56,0,0,0,,,,2012-08-09 08:00,2012-08-15 09:00,,2012-07-02 11:00,2012-07-08 12:00,2012-07-02 11:00,2012-07-08 12:00,2012-07-02 11:00,2012-07-08 12:00,2012-08-09 08:00,2012-08-15 09:00,,PT_Normal,,,,,j6lBLcRkT0e0g59IV1xs4A,0U9JnQMiOk6YIsiiWu85PQ,,,N,0,0,,,2013-11-05 11:09,2013-11-05 11:09,admin,admin,
158,101875,4512,26108,6590,0,N,N,N,CP_Drtn,TT_Task,DT_FixedDUR2,TK_NotStart,JF721.312,90% Submittal,6917,352,0,8,0,8,8,8,0,0,0,,,,2012-08-15 09:00,2012-08-15 17:00,,2012-07-08 12:00,2012-07-09 10:00,2012-07-08 12:00,2012-07-09 10:00,2012-07-08 12:00,2012-07-09 10:00,2012-08-15 09:00,2012-08-15 17:00,,PT_Normal,,,,,79XIYzRfu0u/0C0L1OkRxA,C7hTBAQqiEyYNqvlOGroXg,,,N,0,0,,,2013-11-05 11:09,2013-11-05 11:09,admin,admin,
159,101876,4512,26108,6590,0,N,N,N,CP_Drtn,TT_Task,DT_FixedDUR2,TK_NotStart,JF721.313,90% Comments Incooperation,6917,352,0,56,0,56,56,56,0,0,0,,,,2012-08-16 07:00,2012-08-25 13:00,,2012-07-09 10:00,2012-07-15 11:00,2012-07-09 10:00,2012-07-15 11:00,2012-07-09 10:00,2012-07-15 11:00,2012-08-16 07:00,2012-08-25 13:00,,PT_Normal,,,,,lnw1cag3R0O47f9/+iMwXg,UIcoV7UUWk2wV+KfS2SSeQ,,,N,0,0,,,2013-11-05 11:09,2013-11-05 11:09,admin,admin,
160,101877,4512,26108,6590,0,N,N,N,CP_Drtn,TT_Task,DT_FixedDUR2,TK_NotStart,JF721.314,IFC,6917,352,0,24,0,24,24,24,0,0,0,,,,2012-08-25 13:00,2012-08-27 17:00,,2012-07-15 11:00,2012-07-17 15:00,2012-07-15 11:00,2012-07-17 15:00,2012-07-15 11:00,2012-07-17 15:00,2012-08-25 13:00,2012-08-27 17:00,,PT_Normal,,,,,7U3hovRFyU2GifvlaZ/1qw,fsVRMhL8s0SJGjy9GoYmEA,,,N,0,0,,,2013-11-05 11:09,2013-11-05 11:09,admin,admin,
161,101878,4512,26109,6590,0,N,N,N,CP_Drtn,TT_Task,DT_FixedDUR2,TK_NotStart,JF721.315,60% Submittal (Tank & Foundation Drawings),6917,352,0,8,0,24,24,8,0,0,0,,,,2012-08-28 07:00,2012-08-28 15:00,,2012-07-17 15:00,2012-07-18 13:00,2012-07-17 15:00,2012-07-18 13:00,2012-07-17 15:00,2012-07-18 13:00,2012-08-28 07:00,2012-08-28 15:00,,PT_Normal,,,,,0qLanKMU/UOqz87kqXYMfw,pa4t8JX3xUOmdD13f/QgrQ,,,N,0,0,,,2013-11-05 11:09,2013-11-05 11:09,admin,admin,
162,101879,4512,26109,6590,0,N,N,N,CP_Drtn,TT_Task,DT_FixedDUR2,TK_NotStart,JF721.316,60% Comments Incooperation (Tanks & Foundation Drawings),6912,352,0,40,0,120,120,40,0,0,0,,,,2012-08-28 15:00,2012-09-02 10:00,,2012-07-18 13:00,2012-07-23 08:00,2012-07-18 13:00,2012-07-23 08:00,2012-07-18 13:00,2012-07-23 08:00,2012-08-28 15:00,2012-09-02 10:00,,PT_Normal,,,,,ddRcl9JYcE2DNpkQ8PC6uA,c7cKieqgX0eZB6jCi4CYQg,,,N,0,0,,,2013-11-05 11:09,2013-11-05 11:09,admin,admin,
163,101880,4512,26109,6590,0,N,N,N,CP_Drtn,TT_Task,DT_FixedDUR2,TK_NotStart,JF721.317,90% Submittal (Tanks & Foundation Drawings),6913,352,0,8,0,24,24,8,0,0,0,,,,2012-09-02 10:00,2012-09-03 08:00,,2012-07-23 08:00,2012-07-23 16:00,2012-07-23 08:00,2012-07-23 16:00,2012-07-23 08:00,2012-07-23 16:00,2012-09-02 10:00,2012-09-03 08:00,,PT_Normal,,,,,Wc8KZgPLXkmQZ/JU4HUOzg,Oq91g8uAHkud4KjpRIm7Cw,,,N,0,0,,,2013-11-05 11:09,2013-11-05 11:09,admin,admin,
164,101881,4512,26109,6590,0,N,N,N,CP_Drtn,TT_Task,DT_FixedDUR2,TK_NotStart,JF721.318,90% Comments Incooperation (Tanks & Foundation Drawings),6917,352,0,16,0,48,48,16,0,0,0,,,,2012-09-03 08:00,2012-09-04 14:00,,2012-07-23 16:00,2012-07-25 12:00,2012-07-23 16:00,2012-07-25 12:00,2012-07-23 16:00,2012-07-25 12:00,2012-09-03 08:00,2012-09-04 14:00,,PT_Normal,,,,,9PH7yOoCyUavZwHPF6Yo7g,NLfQYfPgL0in5ot1mowPmA,,,N,0,0,,,2013-11-05 11:09,2013-11-05 11:09,admin,admin,
165,101882,4512,26109,6590,0,N,N,N,CP_Drtn,TT_Task,DT_FixedDUR2,TK_NotStart,JF721.319,IFC,6912,360,0,8,0,24,24,8,0,0,0,,,,2012-09-05 12:00,2012-09-06 10:00,,2012-07-25 12:00,2012-07-26 10:00,2012-07-25 12:00,2012-07-26 10:00,2012-07-25 12:00,2012-07-26 10:00,2012-09-05 12:00,2012-09-06 10:00,,PT_Normal,,,,,YQuI1g0xmk6LDHKqz9toMg,YB8e0idN10af30ffswm68g,,,N,0,0,,,2013-11-05 11:09,2013-11-05 11:09,admin,admin,
166,101883,4512,26069,6590,0,N,N,N,CP_Drtn,TT_FinMile,DT_FixedDrtn,TK_NotStart,3.1,Complete survey and Geotechnical Investigation for both Master Pump Station,,272,0,0,0,0,0,0,0,0,0,,,,2012-07-30 15:00,2012-07-30 15:00,,2012-07-01 13:00,2012-07-01 13:00,2012-07-01 13:00,2012-07-01 13:00,2012-07-01 13:00,2012-07-01 13:00,2012-07-30 15:00,2012-07-30 15:00,,PT_Normal,,,,,akvKRaZsUkO7RK6ndHE8GQ,,,,N,0,0,,,2013-11-05 11:09,2013-11-05 11:09,admin,admin,
167,101884,4512,26070,6590,0,N,N,N,CP_Drtn,TT_FinMile,DT_FixedDrtn,TK_NotStart,3.2,Complete Engineering design and Calculations,,352,0,0,0,0,0,0,0,0,0,,,,2012-08-27 17:00,2012-08-27 17:00,,2012-07-17 15:00,2012-07-17 15:00,2012-07-17 15:00,2012-07-17 15:00,2012-07-17 15:00,2012-07-17 15:00,2012-08-27 17:00,2012-08-27 17:00,,PT_Normal,,,,,lljOPpLBtE+FwUGYkFwDgw,,,,N,0,0,,,2013-11-05 11:09,2013-11-05 11:09,admin,admin,
168,101885,4512,26071,6590,0,N,N,N,CP_Drtn,TT_FinMile,DT_FixedDrtn,TK_NotStart,3.3,Complete Fabrication and GA Drawing with Bill of Quantities,,360,8,0,0,0,0,0,0,0,0,,,,2012-09-06 10:00,2012-09-06 10:00,,2012-07-26 10:00,2012-07-26 10:00,2012-07-26 10:00,2012-07-26 10:00,2012-07-26 10:00,2012-07-26 10:00,2012-09-06 10:00,2012-09-06 10:00,,PT_Normal,,,,,PtP8H4nSKUCfDYgAvGtOtw,,,,N,0,0,,,2013-11-05 11:09,2013-11-05 11:09,admin,admin,
169,101886,4512,26156,6590,0,N,N,N,CP_Drtn,TT_Task,DT_FixedDrtn,TK_NotStart,JF721.155,Soil Investigation Works,6911,0,0,16,0,20,20,16,0,0,0,,,,2012-06-30 07:00,2012-07-01 13:00,,2012-06-30 07:00,2012-07-01 13:00,2012-06-30 07:00,2012-07-01 13:00,2012-06-30 07:00,2012-07-01 13:00,2012-06-30 07:00,2012-07-01 13:00,,PT_Normal,,,,,YTFJJGS9Jkmbt0kOmMqiBw,tilj/BgtPUyImT3a3vjOZA,,,Y,0,0,,,2013-11-05 11:09,2013-11-05 11:09,admin,admin,
170,101887,4512,26116,6590,0,N,N,N,CP_Drtn,TT_Task,DT_FixedDUR2,TK_NotStart,JF721.156,60% Submittal,6917,352,0,8,0,8,8,8,0,0,0,,,,2012-08-08 10:00,2012-08-09 08:00,,2012-07-01 13:00,2012-07-02 11:00,2012-07-01 13:00,2012-07-02 11:00,2012-07-01 13:00,2012-07-02 11:00,2012-08-08 10:00,2012-08-09 08:00,,PT_Normal,,,,,Wib1rijJ/kWZBoYZ7ekXuA,kuI23ko2K06nGh7pYlYbPw,,,N,0,0,,,2013-11-05 11:09,2013-11-05 11:09,admin,admin,
171,101888,4512,26116,6590,0,N,N,N,CP_Drtn,TT_Task,DT_FixedDUR2,TK_NotStart,JF721.157,60% Comments Incooperation,6917,352,0,56,0,56,56,56,0,0,0,,,,2012-08-09 08:00,2012-08-15 09:00,,2012-07-02 11:00,2012-07-08 12:00,2012-07-02 11:00,2012-07-08 12:00,2012-07-02 11:00,2012-07-08 12:00,2012-08-09 08:00,2012-08-15 09:00,,PT_Normal,,,,,Vn5pGFt3fUmVMraDzdlm9Q,0U9JnQMiOk6YIsiiWu85PQ,,,N,0,0,,,2013-11-05 11:09,2013-11-05 11:09,admin,admin,
172,101889,4512,26116,6590,0,N,N,N,CP_Drtn,TT_Task,DT_FixedDUR2,TK_NotStart,JF721.158,90% Submittal,6917,352,0,8,0,8,8,8,0,0,0,,,,2012-08-15 09:00,2012-08-15 17:00,,2012-07-08 12:00,2012-07-09 10:00,2012-07-08 12:00,2012-07-09 10:00,2012-07-08 12:00,2012-07-09 10:00,2012-08-15 09:00,2012-08-15 17:00,,PT_Normal,,,,,/IYeyemPGUCqscPyNxjHgw,C7hTBAQqiEyYNqvlOGroXg,,,N,0,0,,,2013-11-05 11:09,2013-11-05 11:09,admin,admin,
173,101890,4512,26116,6590,0,N,N,N,CP_Drtn,TT_Task,DT_FixedDUR2,TK_NotStart,JF721.159,90% Comments Incooperation,6917,352,0,56,0,56,56,56,0,0,0,,,,2012-08-16 07:00,2012-08-25 13:00,,2012-07-09 10:00,2012-07-15 11:00,2012-07-09 10:00,2012-07-15 11:00,2012-07-09 10:00,2012-07-15 11:00,2012-08-16 07:00,2012-08-25 13:00,,PT_Normal,,,,,zpZRHnKEFkOgDAmU2E+NXQ,UIcoV7UUWk2wV+KfS2SSeQ,,,N,0,0,,,2013-11-05 11:09,2013-11-05 11:09,admin,admin,
174,101891,4512,26116,6590,0,N,N,N,CP_Drtn,TT_Task,DT_FixedDUR2,TK_NotStart,JF721.160,IFC,6917,352,0,24,0,24,24,24,0,0,0,,,,2012-08-25 13:00,2012-08-27 17:00,,2012-07-15 11:00,2012-07-17 15:00,2012-07-15 11:00,2012-07-17 15:00,2012-07-15 11:00,2012-07-17 15:00,2012-08-25 13:00,2012-08-27 17:00,,PT_Normal,,,,,DbVAaQROjU698pPmhSCU8Q,fsVRMhL8s0SJGjy9GoYmEA,,,N,0,0,,,2013-11-05 11:09,2013-11-05 11:09,admin,admin,
175,101892,4512,26076,6590,0,N,N,N,CP_Drtn,TT_Task,DT_FixedDUR2,TK_NotStart,JF721.161,60% Submittal (Tank & Foundation Drawings),6917,560,0,8,0,24,24,8,0,0,0,,,,2012-09-19 10:00,2012-09-20 08:00,,2012-07-17 15:00,2012-07-18 13:00,2012-07-17 15:00,2012-07-18 13:00,2012-07-17 15:00,2012-07-18 13:00,2012-09-19 10:00,2012-09-20 08:00,,PT_Normal,,,,,49e0ptqP3Em9yzzTQa247A,pa4t8JX3xUOmdD13f/QgrQ,,,N,0,0,,,2013-11-05 11:09,2013-11-05 11:09,admin,admin,
176,101893,4512,26076,6590,0,N,N,N,CP_Drtn,TT_Task,DT_FixedDUR2,TK_NotStart,JF721.162,60% Comments Incooperation (Tanks & Foundation Drawings),6913,560,0,40,0,120,120,40,0,0,0,,,,2012-09-20 08:00,2012-09-24 13:00,,2012-07-18 13:00,2012-07-23 08:00,2012-07-18 13:00,2012-07-23 08:00,2012-07-18 13:00,2012-07-23 08:00,2012-09-20 08:00,2012-09-24 13:00,,PT_Normal,,,,,J5zOZnpN+0CGz9lRe0/u2g,c7cKieqgX0eZB6jCi4CYQg,,,N,0,0,,,2013-11-05 11:09,2013-11-05 11:09,admin,admin,
177,101894,4512,26076,6590,0,N,N,N,CP_Drtn,TT_Task,DT_FixedDUR2,TK_NotStart,JF721.163,90% Submittal (Tanks & Foundation Drawings),6917,560,0,8,0,24,24,8,0,0,0,,,,2012-09-24 13:00,2012-09-25 11:00,,2012-07-23 08:00,2012-07-23 16:00,2012-07-23 08:00,2012-07-23 16:00,2012-07-23 08:00,2012-07-23 16:00,2012-09-24 13:00,2012-09-25 11:00,,PT_Normal,,,,,kzK1+OOdQ0mcJiViKjukcg,Oq91g8uAHkud4KjpRIm7Cw,,,N,0,0,,,2013-11-05 11:09,2013-11-05 11:09,admin,admin,
178,101895,4512,26076,6590,0,N,N,N,CP_Drtn,TT_Task,DT_FixedDUR2,TK_NotStart,JF721.164,90% Comments Incooperation (Tanks & Foundation Drawings),6912,560,0,16,0,48,48,16,0,0,0,,,,2012-09-25 11:00,2012-09-26 17:00,,2012-07-23 16:00,2012-07-25 12:00,2012-07-23 16:00,2012-07-25 12:00,2012-07-23 16:00,2012-07-25 12:00,2012-09-25 11:00,2012-09-26 17:00,,PT_Normal,,,,,udFEOuxRqEO/j6ZACnEj9A,NLfQYfPgL0in5ot1mowPmA,,,N,0,0,,,2013-11-05 11:09,2013-11-05 11:09,admin,admin,
179,101896,4512,26076,6590,0,N,N,N,CP_Drtn,TT_Task,DT_FixedDUR2,TK_NotStart,JF721.165,IFC,6917,568,0,8,0,24,24,8,0,0,0,,,,2012-09-27 15:00,2012-09-29 08:00,,2012-07-25 12:00,2012-07-26 10:00,2012-07-25 12:00,2012-07-26 10:00,2012-07-25 12:00,2012-07-26 10:00,2012-09-27 15:00,2012-09-29 08:00,,PT_Normal,,,,,0c2BIrk1BE+I4Knce0wgJQ,YB8e0idN10af30ffswm68g,,,N,0,0,,,2013-11-05 11:09,2013-11-05 11:09,admin,admin,
180,101897,4512,26077,6590,0,N,N,N,CP_Drtn,TT_FinMile,DT_FixedDrtn,TK_NotStart,2.2,Complete survey and Geotechnical Investigation for both Master Pump Station,,352,0,0,0,0,0,0,0,0,0,,,,2012-08-08 10:00,2012-08-08 10:00,,2012-07-01 13:00,2012-07-01 13:00,2012-07-01 13:00,2012-07-01 13:00,2012-07-01 13:00,2012-07-01 13:00,2012-08-08 10:00,2012-08-08 10:00,,PT_Normal,,,,,uA9LbTZQwU+1iZ0tlTOCfg,,,,N,0,0,,,2013-11-05 11:09,2013-11-05 11:09,admin,admin,
181,101898,4512,26078,6590,0,N,N,N,CP_Drtn,TT_FinMile,DT_FixedDrtn,TK_NotStart,2.3,Complete Engineering design and Calculations,,560,0,0,0,0,0,0,0,0,0,,,,2012-09-19 10:00,2012-09-19 10:00,,2012-07-17 15:00,2012-07-17 15:00,2012-07-17 15:00,2012-07-17 15:00,2012-07-17 15:00,2012-07-17 15:00,2012-09-19 10:00,2012-09-19 10:00,,PT_Normal,,,,,LInL8zuYfEGHjCdMkP9h2g,,,,N,0,0,,,2013-11-05 11:09,2013-11-05 11:09,admin,admin,
182,101899,4512,26079,6590,0,N,N,N,CP_Drtn,TT_FinMile,DT_FixedDrtn,TK_NotStart,2.4,Complete Fabrication and GA Drawing with Bill of Quantities,,568,8,0,0,0,0,0,0,0,0,,,,2012-09-29 08:00,2012-09-29 08:00,,2012-07-26 10:00,2012-07-26 10:00,2012-07-26 10:00,2012-07-26 10:00,2012-07-26 10:00,2012-07-26 10:00,2012-09-29 08:00,2012-09-29 08:00,,PT_Normal,,,,,dT1c8+U+xUOARCSgeE47WA,,,,N,0,0,,,2013-11-05 11:09,2013-11-05 11:09,admin,admin,
183,101900,4512,26081,6590,0,N,N,N,CP_Drtn,TT_Task,DT_FixedDUR2,TK_NotStart,JF721.172,PO Issued,,608,0,24,0,0,0,24,0,0,0,,,,2012-09-16 16:00,2012-09-19 10:00,,2012-07-10 08:00,2012-07-12 12:00,2012-07-10 08:00,2012-07-12 12:00,2012-07-10 08:00,2012-07-12 12:00,2012-09-16 16:00,2012-09-19 10:00,,PT_Normal,,,,,YoIm3X39hkCopmO7buDRCQ,xMKajeOpB0i4h5bLtqRGTg,,,N,0,0,,,2013-11-05 11:09,2013-11-05 11:09,admin,admin,
184,101901,4512,26081,6590,0,N,N,N,CP_Drtn,TT_Task,DT_FixedDUR2,TK_NotStart,JF721.173,Ma'aden Site Delievery,,608,224,64,0,0,0,64,0,0,0,,,,2012-09-19 10:00,2012-09-26 09:00,,2012-07-12 12:00,2012-07-19 11:00,2012-07-12 12:00,2012-07-19 11:00,2012-07-12 12:00,2012-07-19 11:00,2012-09-19 10:00,2012-09-26 09:00,,PT_Normal,,,,,Y42uiPds+0+RXdWIpXtkKg,WxdmX0lSU0yS7+MyaW6J3A,,,N,0,0,,,2013-11-05 11:09,2013-11-05 11:09,admin,admin,
185,101902,4512,26101,6590,0,N,N,N,CP_Drtn,TT_Task,DT_FixedDUR2,TK_NotStart,JF721.174,Approval For Vendor Drawings & Specifications,,560,0,24,0,0,0,24,0,0,0,,,,2012-09-26 09:00,2012-09-29 08:00,,2012-07-24 14:00,2012-07-27 10:30,2012-07-24 14:00,2012-07-27 10:30,2012-07-24 14:00,2012-07-27 10:30,2012-09-26 09:00,2012-09-29 08:00,,PT_Normal,,,,,fmArMvQDA02tabIg3CNSIA,xFeCmUgdS0OLH25pLZzIMQ,,,N,0,0,,,2013-11-05 11:09,2013-11-05 11:09,admin,admin,
186,101903,4512,26101,6590,0,N,N,N,CP_Drtn,TT_Task,DT_FixedDUR2,TK_NotStart,JF721.175,P.O Issued,,1272,0,216,0,0,0,216,0,0,0,,,,2012-12-16 10:00,2013-01-08 11:00,,2012-07-27 10:30,2012-08-22 14:00,2012-07-27 10:30,2012-08-22 14:00,2012-07-27 10:30,2012-08-22 14:00,2012-12-16 10:00,2013-01-08 11:00,,PT_Normal,,,,,r6MkHevCek6ImrgKcylZiw,qnXKJs7SVE2Aq/+ydLIq0g,,,N,0,0,,,2013-11-05 11:09,2013-11-05 11:09,admin,admin,
187,101904,4512,26083,6590,0,N,N,N,CP_Drtn,TT_Task,DT_FixedDUR2,TK_NotStart,JF721.180,Approve Vendor Drawings & Specifcations,,352,0,24,0,0,0,24,0,0,0,,,,2012-08-28 07:00,2012-08-30 11:00,,2012-07-17 15:00,2012-07-20 11:30,2012-07-17 15:00,2012-07-20 11:30,2012-07-17 15:00,2012-07-20 11:30,2012-08-28 07:00,2012-08-30 11:00,,PT_Normal,,,,,A4VkyW1yTkiMrqUwWAVE6Q,UxxwI734Ikm3B6zma4PbGA,,,N,0,0,,,2013-11-05 11:09,2013-11-05 11:09,admin,admin,
188,101905,4512,26083,6590,0,N,N,N,CP_Drtn,TT_Task,DT_FixedDUR2,TK_NotStart,JF721.181,P.O Issued,,352,0,24,0,0,0,24,0,0,0,,,,2012-08-30 11:00,2012-09-02 10:00,,2012-07-20 11:30,2012-07-23 08:00,2012-07-20 11:30,2012-07-23 08:00,2012-07-20 11:30,2012-07-23 08:00,2012-08-30 11:00,2012-09-02 10:00,,PT_Normal,,,,,bgjRhPpezEG8j2kgrcIhJw,Y+QGEhmC5UqgCTu9l309JA,,,N,0,0,,,2013-11-05 11:09,2013-11-05 11:09,admin,admin,
189,101906,4512,26084,6590,0,N,N,N,CP_Drtn,TT_Task,DT_FixedDUR2,TK_NotStart,JF721.182,Approval for Vendor Drawings & Specifications,,560,0,48,0,0,0,48,0,0,0,,,,2012-09-29 08:00,2012-10-03 16:00,,2012-07-27 10:30,2012-08-01 11:00,2012-07-27 10:30,2012-08-01 11:00,2012-07-27 10:30,2012-08-01 11:00,2012-09-29 08:00,2012-10-03 16:00,,PT_Normal,,,,,RynRx8GyHkiE3lHFNMORHA,At760YrmaEqZSF6XKJXmdA,,,N,0,0,,,2013-11-05 11:09,2013-11-05 11:09,admin,admin,
190,101907,4512,26084,6590,0,N,N,N,CP_Drtn,TT_Task,DT_FixedDUR2,TK_NotStart,JF721.183,PO  Issued,,1184,0,120,0,0,0,120,0,0,0,,,,2012-12-11 15:00,2012-12-24 15:00,,2012-08-01 11:00,2012-08-14 11:00,2012-08-01 11:00,2012-08-14 11:00,2012-08-01 11:00,2012-08-14 11:00,2012-12-11 15:00,2012-12-24 15:00,,PT_Normal,,,,,EmDx8u7yV0KGj6cR+qFzag,QM2hzVjO+0OX23YpP0LSlA,,,N,0,0,,,2013-11-05 11:09,2013-11-05 11:09,admin,admin,
191,101908,4512,26085,6590,0,N,N,N,CP_Drtn,TT_Task,DT_FixedDUR2,TK_NotStart,JF721.184,Approval for Vendor Drawings & Specifications,,560,0,48,0,0,0,48,0,0,0,,,,2012-09-29 08:00,2012-10-03 16:00,,2012-07-27 10:30,2012-08-01 11:00,2012-07-27 10:30,2012-08-01 11:00,2012-07-27 10:30,2012-08-01 11:00,2012-09-29 08:00,2012-10-03 16:00,,PT_Normal,,,,,pFdM2oBct0+D9xt5ZIvSPA,P4hIy46WnkaAgBahNcd1Fg,,,N,0,0,,,2013-11-05 11:09,2013-11-05 11:09,admin,admin,
192,101909,4512,26085,6590,0,N,N,N,CP_Drtn,TT_Task,DT_FixedDUR2,TK_NotStart,JF721.185,PO issued,,560,0,48,0,0,0,48,0,0,0,,,,2012-10-03 16:00,2012-10-09 09:00,,2012-08-01 11:00,2012-08-06 14:00,2012-08-01 11:00,2012-08-06 14:00,2012-08-01 11:00,2012-08-06 14:00,2012-10-03 16:00,2012-10-09 09:00,,PT_Normal,,,,,64gatz+ncUm77B7ugERDVQ,Q+7N4KuxlESJ8vFhIW4qJw,,,N,0,0,,,2013-11-05 11:09,2013-11-05 11:09,admin,admin,
193,101910,4512,26127,6590,0,N,N,N,CP_Drtn,TT_Task,DT_FixedDUR2,TK_NotStart,JF721.186,Approval For vendor Specifcations,,648,0,64,0,0,0,64,0,0,0,,,,2012-10-13 14:00,2012-10-20 13:00,,2012-08-01 11:00,2012-08-08 10:00,2012-08-01 11:00,2012-08-08 10:00,2012-08-01 11:00,2012-08-08 10:00,2012-10-13 14:00,2012-10-20 13:00,,PT_Normal,,,,,K9GnWEZIdk6bnfPtTqgSjQ,y+HmYyh9cEyxgRIPJ0WXkQ,,,N,0,0,,,2013-11-05 11:09,2013-11-05 11:09,admin,admin,
194,101911,4512,26127,6590,0,N,N,N,CP_Drtn,TT_Task,DT_FixedDUR2,TK_NotStart,JF721.187,PO issued,,648,0,32,0,0,0,32,0,0,0,,,,2012-10-20 13:00,2012-10-23 15:00,,2012-08-08 10:00,2012-08-11 17:00,2012-08-08 10:00,2012-08-11 17:00,2012-08-08 10:00,2012-08-11 17:00,2012-10-20 13:00,2012-10-23 15:00,,PT_Normal,,,,,ee1qQYs/A0iEjwyKWd86vg,np9x9mx8dE6Sens4t7ctEQ,,,N,0,0,,,2013-11-05 11:09,2013-11-05 11:09,admin,admin,
195,101912,4512,26128,6590,0,N,N,N,CP_Drtn,TT_Task,DT_FixedDUR2,TK_NotStart,JF721.176,Approval for vendor Drawings & Specifcations,,560,0,24,0,0,0,24,0,0,0,,,,2012-09-26 09:00,2012-09-29 08:00,,2012-07-24 14:00,2012-07-27 10:30,2012-07-24 14:00,2012-07-27 10:30,2012-07-24 14:00,2012-07-27 10:30,2012-09-26 09:00,2012-09-29 08:00,,PT_Normal,,,,,5WDSMA1g+EOf9ek+8SgzgA,cSJ8dgKJP0Ww5ZhDDHiEBQ,,,N,0,0,,,2013-11-05 11:09,2013-11-05 11:09,admin,admin,
196,101913,4512,26128,6590,0,N,N,N,CP_Drtn,TT_Task,DT_FixedDUR2,TK_NotStart,JF721.177,P.O Issued,,1272,0,216,0,0,0,216,0,0,0,,,,2012-12-16 10:00,2013-01-08 11:00,,2012-07-27 10:30,2012-08-22 14:00,2012-07-27 10:30,2012-08-22 14:00,2012-07-27 10:30,2012-08-22 14:00,2012-12-16 10:00,2013-01-08 11:00,,PT_Normal,,,,,0Zyavwd2V0id4US2z61BVg,oeNA0lF1IUuYn1p65K4tsA,,,N,0,0,,,2013-11-05 11:09,2013-11-05 11:09,admin,admin,
197,101914,4512,26128,6590,0,N,N,N,CP_Drtn,TT_Task,DT_FixedDUR2,TK_NotStart,JF721.178,Instrumentation Delievered to Ma'aden & Installed,6965,352,0,224,0,1350,1350,224,600,0,600,,,,2013-06-20 08:00,2013-07-14 12:00,,2013-05-13 11:00,2013-06-06 10:00,2013-05-13 11:00,2013-06-06 10:00,2013-05-13 11:00,2013-06-06 10:00,2013-06-20 08:00,2013-07-14 12:00,,PT_Normal,,,,,gXaFTZKZmUuHjcOwPVZ/sg,XWpE3LpQKUSrjVSLh/WhAA,,,N,0,0,,,2013-11-05 11:09,2013-11-05 11:09,admin,admin,
198,101915,4512,26128,6590,0,N,N,N,CP_Drtn,TT_Task,DT_FixedDUR2,TK_NotStart,JF721.179,Ma'aden Instrumentation Inspection,6964,352,0,24,0,80,80,24,40,0,40,,,,2013-07-14 12:00,2013-07-16 16:00,,2013-06-06 10:00,2013-06-09 09:00,2013-06-06 10:00,2013-06-09 09:00,2013-06-06 10:00,2013-06-09 09:00,2013-07-14 12:00,2013-07-16 16:00,,PT_Normal,,,,,OHQnWGZ7aESt2hpP1FEubA,o7LARIfvNEaQ09oTYwd4YA,,,N,0,0,,,2013-11-05 11:09,2013-11-05 11:09,admin,admin,
199,101916,4512,26088,6590,0,N,N,N,CP_Drtn,TT_Task,DT_FixedDUR2,TK_NotStart,JF721.191,Define Layout,,352,0,24,0,0,0,24,0,0,0,,,,2012-10-12 13:30,2012-10-15 10:00,,2012-09-04 14:00,2012-09-07 10:30,2012-09-04 14:00,2012-09-07 10:30,2012-09-04 14:00,2012-09-07 10:30,2012-10-12 13:30,2012-10-15 10:00,,PT_Normal,,,,,DMhnHFpwTECPxeuTNbwA0A,NqASMdRNOUqFzefQ0Sq3bQ,,,N,0,0,,,2013-11-05 11:09,2013-11-05 11:09,admin,admin,
200,101917,4512,26088,6590,0,N,N,N,CP_Drtn,TT_Task,DT_FixedDUR2,TK_NotStart,JF721.192,Cutting,,352,0,24,0,0,0,24,0,0,0,,,,2012-10-12 13:30,2012-10-15 10:00,,2012-09-04 14:00,2012-09-07 10:30,2012-09-04 14:00,2012-09-07 10:30,2012-09-04 14:00,2012-09-07 10:30,2012-10-12 13:30,2012-10-15 10:00,,PT_Normal,,,,,o4lSHpLWVky7cFUoAVcRNg,tt3gxgqxak+7rDxte4XbAg,,,N,0,0,,,2013-11-05 11:09,2013-11-05 11:09,admin,admin,
201,101918,4512,26088,6590,0,N,N,N,CP_Drtn,TT_Task,DT_FixedDUR2,TK_NotStart,JF721.193,Fit-up,,352,0,32,0,0,0,32,0,0,0,,,,2012-10-16 16:00,2012-10-20 13:00,,2012-09-09 09:00,2012-09-12 11:00,2012-09-09 09:00,2012-09-12 11:00,2012-09-09 09:00,2012-09-12 11:00,2012-10-16 16:00,2012-10-20 13:00,,PT_Normal,,,,,wgqBWj9NEkykeKk4HketEw,+bPJdke39EC0UzUc8wEY4A,,,N,0,0,,,2013-11-05 11:09,2013-11-05 11:09,admin,admin,
202,101919,4512,26088,6590,0,N,N,N,CP_Drtn,TT_Task,DT_FixedDUR2,TK_NotStart,JF721.194,Welding,,352,0,32,0,0,0,32,0,0,0,,,,2012-10-17 14:00,2012-10-21 11:00,,2012-09-10 07:00,2012-09-13 09:00,2012-09-10 07:00,2012-09-13 09:00,2012-09-10 07:00,2012-09-13 09:00,2012-10-17 14:00,2012-10-21 11:00,,PT_Normal,,,,,BrK4V4cdKEW/51s6MbO+Zg,BabspVpVGkKisBRG/u9JMw,,,N,0,0,,,2013-11-05 11:09,2013-11-05 11:09,admin,admin,
203,101920,4512,26088,6590,0,N,N,N,CP_Drtn,TT_Task,DT_FixedDUR2,TK_NotStart,JF721.195,Shop Blasting/Painting,,352,0,32,0,0,0,32,0,0,0,,,,2012-10-18 12:00,2012-10-22 09:00,,2012-09-10 15:00,2012-09-13 17:00,2012-09-10 15:00,2012-09-13 17:00,2012-09-10 15:00,2012-09-13 17:00,2012-10-18 12:00,2012-10-22 09:00,,PT_Normal,,,,,+1QZk5XsU0OmyTcdoAnbAw,JgwK0VqNtkWPp1NEl6/QyA,,,N,0,0,,,2013-11-05 11:09,2013-11-05 11:09,admin,admin,
204,101921,4512,26088,6590,0,N,N,N,CP_Drtn,TT_Task,DT_FixedDUR2,TK_NotStart,JF721.196,Inspect & Accept for use,,352,0,24,0,0,0,24,0,0,0,,,,2012-10-22 09:00,2012-10-24 13:00,,2012-09-14 09:30,2012-09-16 16:00,2012-09-14 09:30,2012-09-16 16:00,2012-09-14 09:30,2012-09-16 16:00,2012-10-22 09:00,2012-10-24 13:00,,PT_Normal,,,,,+YT3QRbhG0e6JCoZCXsRdQ,NIRxJhgScUO/HK/CeyoG5g,,,N,0,0,,,2013-11-05 11:09,2013-11-05 11:09,admin,admin,
205,101922,4512,26130,6590,0,N,N,N,CP_Drtn,TT_Task,DT_FixedDUR2,TK_NotStart,JF721.197,Define Layout,,784,0,32,0,0,0,32,0,0,0,,,,2012-12-02 12:00,2012-12-05 14:00,,2012-09-07 10:30,2012-09-10 15:00,2012-09-07 10:30,2012-09-10 15:00,2012-09-07 10:30,2012-09-10 15:00,2012-12-02 12:00,2012-12-05 14:00,,PT_Normal,,,,,WAOMrE7ByEO2uLw8YZlAzQ,KvXnSNnJE0ebZGxmJ4g79A,,,N,0,0,,,2013-11-05 11:09,2013-11-05 11:09,admin,admin,
206,101923,4512,26130,6590,0,N,N,N,CP_Drtn,TT_Task,DT_FixedDUR2,TK_NotStart,JF721.198,Cutting,,784,0,40,0,0,0,40,0,0,0,,,,2012-12-02 12:00,2012-12-06 12:00,,2012-09-07 10:30,2012-09-11 13:00,2012-09-07 10:30,2012-09-11 13:00,2012-09-07 10:30,2012-09-11 13:00,2012-12-02 12:00,2012-12-06 12:00,,PT_Normal,,,,,+y9QSjYsAkSQkOIa7Vf/Zg,HpEj9IuMTkSNMW2leNhO7Q,,,N,0,0,,,2013-11-05 11:09,2013-11-05 11:09,admin,admin,
207,101924,4512,26130,6590,0,N,N,N,CP_Drtn,TT_Task,DT_FixedDUR2,TK_NotStart,JF721.199,Bevelling/Rolling,,784,0,48,0,0,0,48,0,0,0,,,,2012-12-04 08:00,2012-12-09 11:00,,2012-09-09 09:00,2012-09-13 17:00,2012-09-09 09:00,2012-09-13 17:00,2012-09-09 09:00,2012-09-13 17:00,2012-12-04 08:00,2012-12-09 11:00,,PT_Normal,,,,,Eqny3qy8HEWAyQ/MeT2nAQ,cYzpiAMs+0KOa/HVaZX2AA,,,N,0,0,,,2013-11-05 11:09,2013-11-05 11:09,admin,admin,
208,101925,4512,26130,6590,0,N,N,N,CP_Drtn,TT_Task,DT_FixedDUR2,TK_NotStart,JF721.200,Shop Blasting/Painting,,784,0,48,0,0,0,48,0,0,0,,,,2012-12-06 12:00,2012-12-11 15:00,,2012-09-11 13:00,2012-09-16 16:00,2012-09-11 13:00,2012-09-16 16:00,2012-09-11 13:00,2012-09-16 16:00,2012-12-06 12:00,2012-12-11 15:00,,PT_Normal,,,,,VPYzegllDEau8ev5ruk43Q,7HNi5PeaV0y2Y2hivMcf9w,,,N,0,0,,,2013-11-05 11:09,2013-11-05 11:09,admin,admin,
209,101926,4512,26130,6590,0,N,N,N,CP_Drtn,TT_Task,DT_FixedDUR2,TK_NotStart,JF721.201,Inspect & Accept for use,,784,0,32,0,0,0,32,0,0,0,,,,2012-12-11 15:00,2012-12-15 12:00,,2012-09-16 16:00,2012-09-20 08:00,2012-09-16 16:00,2012-09-20 08:00,2012-09-16 16:00,2012-09-20 08:00,2012-12-11 15:00,2012-12-15 12:00,,PT_Normal,,,,,BKouNRFCgkWxg3njTVP03g,2GHiYf/TR0Koqh0FB+0+zg,,,N,0,0,,,2013-11-05 11:09,2013-11-05 11:09,admin,admin,
210,101927,4512,26090,6590,0,N,N,N,CP_Drtn,TT_Task,DT_FixedDUR2,TK_NotStart,JF721.202,Define layout,,1184,0,24,0,0,0,24,0,0,0,,,,2013-01-19 15:00,2013-01-22 09:00,,2012-09-12 11:00,2012-09-15 10:00,2012-09-12 11:00,2012-09-15 10:00,2012-09-12 11:00,2012-09-15 10:00,2013-01-19 15:00,2013-01-22 09:00,,PT_Normal,,,,,4dmTyPN1EkyggEGZii6rAg,BObSzZpwSEyt71E/AtUl6w,,,N,0,0,,,2013-11-05 11:09,2013-11-05 11:09,admin,admin,
211,101928,4512,26090,6590,0,N,N,N,CP_Drtn,TT_Task,DT_FixedDUR2,TK_NotStart,JF721.203,Cutting,,1184,0,32,0,0,0,32,0,0,0,,,,2013-01-22 09:00,2013-01-25 13:30,,2012-09-15 10:00,2012-09-18 12:00,2012-09-15 10:00,2012-09-18 12:00,2012-09-15 10:00,2012-09-18 12:00,2013-01-22 09:00,2013-01-25 13:30,,PT_Normal,,,,,IeRSTXvefUO3jVmPsa3z6Q,AmRQTCoh50qjBmbNOJIlPA,,,N,0,0,,,2013-11-05 11:09,2013-11-05 11:09,admin,admin,
212,101929,4512,26090,6590,0,N,N,N,CP_Drtn,TT_Task,DT_FixedDUR2,TK_NotStart,JF721.204,Bevelling,,1184,0,40,0,0,0,40,0,0,0,,,,2013-01-23 07:00,2013-01-27 11:00,,2012-09-16 08:00,2012-09-20 08:00,2012-09-16 08:00,2012-09-20 08:00,2012-09-16 08:00,2012-09-20 08:00,2013-01-23 07:00,2013-01-27 11:00,,PT_Normal,,,,,diNOIK8eF0eW7Ky00MWg/w,yFpHDPcaYUWOe29l70K2vw,,,N,0,0,,,2013-11-05 11:09,2013-11-05 11:09,admin,admin,
213,101930,4512,26090,6590,0,N,N,N,CP_Drtn,TT_Task,DT_FixedDUR2,TK_NotStart,JF721.205,Fit-up/Welding,,1184,0,48,0,0,0,48,0,0,0,,,,2013-01-24 13:00,2013-01-29 08:00,,2012-09-17 14:00,2012-09-22 17:00,2012-09-17 14:00,2012-09-22 17:00,2012-09-17 14:00,2012-09-22 17:00,2013-01-24 13:00,2013-01-29 08:00,,PT_Normal,,,,,hem3k+KEN06DwUtxfe+6gg,qSE5Fing/0mvKJhg5mIVeA,,,N,0,0,,,2013-11-05 11:09,2013-11-05 11:09,admin,admin,
214,101931,4512,26090,6590,0,N,N,N,CP_Drtn,TT_Task,DT_FixedDUR2,TK_NotStart,JF721.206,Blasting/Painting,,1184,0,56,0,0,0,56,0,0,0,,,,2013-01-27 11:00,2013-02-01 12:30,,2012-09-20 08:00,2012-09-26 09:00,2012-09-20 08:00,2012-09-26 09:00,2012-09-20 08:00,2012-09-26 09:00,2013-01-27 11:00,2013-02-01 12:30,,PT_Normal,,,,,uChJgsB9Pkq6MUXtRjkS/g,P4/Fk4uRBEatogu64eu/Nw,,,N,0,0,,,2013-11-05 11:09,2013-11-05 11:09,admin,admin,
215,101932,4512,26090,6590,0,N,N,N,CP_Drtn,TT_Task,DT_FixedDUR2,TK_NotStart,JF721.207,Inspect & Accept for use,,1184,0,24,0,0,0,24,0,0,0,,,,2013-02-01 12:30,2013-02-04 09:00,,2012-09-26 09:00,2012-09-29 08:00,2012-09-26 09:00,2012-09-29 08:00,2012-09-26 09:00,2012-09-29 08:00,2013-02-01 12:30,2013-02-04 09:00,,PT_Normal,,,,,AJA3GvfB/0m+o6Om4lgBWA,mf4ZiKwzEkWAlgfh/a1UzQ,,,N,0,0,,,2013-11-05 11:09,2013-11-05 11:09,admin,admin,
216,101933,4512,26091,6590,0,N,N,N,CP_Drtn,TT_Task,DT_FixedDUR2,TK_NotStart,JF721.188,Plates,,352,0,736,0,0,0,736,0,0,0,,,,2012-09-02 10:00,2012-11-21 16:00,,2012-07-23 08:00,2012-10-13 14:00,2012-07-23 08:00,2012-10-13 14:00,2012-07-23 08:00,2012-10-13 14:00,2012-09-02 10:00,2012-11-21 16:00,,PT_Normal,,,,,LfEcX8eBOUGVsIT/iwVyOg,p4b5Mw6c2Uau5vTANZNEzw,,,N,0,0,,,2013-11-05 11:09,2013-11-05 11:09,admin,admin,
217,101934,4512,26091,6590,0,N,N,N,CP_Drtn,TT_Task,DT_FixedDUR2,TK_NotStart,JF721.189,Profile Material,,1184,0,240,0,0,0,240,0,0,0,,,,2012-12-24 15:00,2013-01-19 15:00,,2012-08-14 11:00,2012-09-12 11:00,2012-08-14 11:00,2012-09-12 11:00,2012-08-14 11:00,2012-09-12 11:00,2012-12-24 15:00,2013-01-19 15:00,,PT_Normal,,,,,TvOZlx1OU0utYF0q3lgL0Q,XvbN9j8Um0u+a5vi4V340A,,,N,0,0,,,2013-11-05 11:09,2013-11-05 11:09,admin,admin,
218,101935,4512,26091,6590,0,N,N,N,CP_Drtn,TT_Task,DT_FixedDUR2,TK_NotStart,JF721.190,Pipes & Fittings,,560,0,136,0,0,0,136,0,0,0,,,,2012-10-09 09:00,2012-10-23 15:00,,2012-08-06 14:00,2012-08-24 12:30,2012-08-06 14:00,2012-08-24 12:30,2012-08-06 14:00,2012-08-24 12:30,2012-10-09 09:00,2012-10-23 15:00,,PT_Normal,,,,,sBdPq7bi4kKblzE6LjcqCQ,xlcN0EV8I0SapJEwHcmzTg,,,N,0,0,,,2013-11-05 11:09,2013-11-05 11:09,admin,admin,
219,101936,4512,26092,6590,0,N,N,N,CP_Drtn,TT_Task,DT_FixedDUR2,TK_NotStart,JF721.166,PO Issued,,384,0,24,0,0,0,24,0,0,0,,,,2012-08-12 07:00,2012-08-14 11:00,,2012-07-01 13:00,2012-07-03 17:00,2012-07-01 13:00,2012-07-03 17:00,2012-07-01 13:00,2012-07-03 17:00,2012-08-12 07:00,2012-08-14 11:00,,PT_Normal,,,,,qEl2rk3OQEa/32PbqFuGOA,zCk7aObfCUGOntxgxjFmMQ,,,N,0,0,,,2013-11-05 11:09,2013-11-05 11:09,admin,admin,
220,101937,4512,26092,6590,0,N,N,N,CP_Drtn,TT_Task,DT_FixedDUR2,TK_NotStart,JF721.167,Ma'aden Site Delievery,,384,0,56,0,0,0,56,0,0,0,,,,2012-08-14 11:00,2012-08-23 12:00,,2012-07-04 07:00,2012-07-10 08:00,2012-07-04 07:00,2012-07-10 08:00,2012-07-04 07:00,2012-07-10 08:00,2012-08-14 11:00,2012-08-23 12:00,,PT_Normal,,,,,N6jiX6etaUGzyLdmbSWvWg,6oHrZtG370unhirho4VupA,,,N,0,0,,,2013-11-05 11:09,2013-11-05 11:09,admin,admin,
221,101938,4512,26093,6590,0,N,N,N,CP_Drtn,TT_Task,DT_FixedDUR2,TK_NotStart,JF721.168,Approval for Vendor Drawings & SPecifications,,560,0,24,0,0,0,24,0,0,0,,,,2012-09-26 09:00,2012-09-29 08:00,,2012-07-24 14:00,2012-07-27 10:30,2012-07-24 14:00,2012-07-27 10:30,2012-07-24 14:00,2012-07-27 10:30,2012-09-26 09:00,2012-09-29 08:00,,PT_Normal,,,,,glphV0i5aUaDtQ310O9GZg,6r11gtJdnUe/59WOKiaHmQ,,,N,0,0,,,2013-11-05 11:09,2013-11-05 11:09,admin,admin,
222,101939,4512,26093,6590,0,N,N,N,CP_Drtn,TT_Task,DT_FixedDUR2,TK_NotStart,JF721.169,PO Issued,,1272,0,216,0,0,0,216,0,0,0,,,,2012-12-16 10:00,2013-01-08 11:00,,2012-07-27 10:30,2012-08-22 14:00,2012-07-27 10:30,2012-08-22 14:00,2012-07-27 10:30,2012-08-22 14:00,2012-12-16 10:00,2013-01-08 11:00,,PT_Normal,,,,,9bAvRHyKsUumjjZgq2IR5w,NmLAcJcOhUaoeMu+fvzAow,,,N,0,0,,,2013-11-05 11:09,2013-11-05 11:09,admin,admin,
223,101940,4512,26093,6590,0,N,N,N,CP_Drtn,TT_Task,DT_FixedDUR2,TK_NotStart,JF721.170,CP System Delievered to Ma'aden Site & Installed,6942,352,0,160,0,1440,1440,160,640,0,640,,,,2013-05-31 11:30,2013-06-17 14:00,,2013-04-23 12:00,2013-05-10 14:30,2013-04-23 12:00,2013-05-10 14:30,2013-04-23 12:00,2013-05-10 14:30,2013-05-31 11:30,2013-06-17 14:00,,PT_Normal,,,,,ybBVgTZhyEWqN4JkOdQ6VA,+o+DyVVQ/kCd+4ON0641Rw,,,N,0,0,,,2013-11-05 11:09,2013-11-05 11:09,admin,admin,
224,101941,4512,26093,6590,0,N,N,N,CP_Drtn,TT_Task,DT_FixedDUR2,TK_NotStart,JF721.171,Ma'aden CP Inspection,6965,352,0,24,0,80,80,24,40,0,40,,,,2013-06-17 14:00,2013-06-20 08:00,,2013-05-11 07:00,2013-05-13 11:00,2013-05-11 07:00,2013-05-13 11:00,2013-05-11 07:00,2013-05-13 11:00,2013-06-17 14:00,2013-06-20 08:00,,PT_Normal,,,,,NWmrbjrw0kWW4yAVYavUWQ,DX4s+DB7hUuHMSWuFd396Q,,,N,0,0,,,2013-11-05 11:09,2013-11-05 11:09,admin,admin,
225,101942,4512,26135,6590,0,N,N,N,CP_Drtn,TT_Task,DT_FixedDUR2,TK_NotStart,JF721.208,Define Layout,,1352,0,40,0,0,0,40,0,0,0,,,,2013-02-16 11:00,2013-02-20 11:00,,2012-09-23 07:00,2012-09-26 17:00,2012-09-23 07:00,2012-09-26 17:00,2012-09-23 07:00,2012-09-26 17:00,2013-02-16 11:00,2013-02-20 11:00,,PT_Normal,,,,,APCGXXfPHEGrSrdHAJ1j1Q,4EwGlVvj1Euqj7jLBXyyvw,,,N,0,0,,,2013-11-05 11:09,2013-11-05 11:09,admin,admin,
226,101943,4512,26135,6590,0,N,N,N,CP_Drtn,TT_Task,DT_FixedDUR2,TK_NotStart,JF721.209,Cutting,,1352,0,56,0,0,0,56,0,0,0,,,,2013-02-20 11:00,2013-02-26 12:00,,2012-09-27 07:00,2012-10-03 08:00,2012-09-27 07:00,2012-10-03 08:00,2012-09-27 07:00,2012-10-03 08:00,2013-02-20 11:00,2013-02-26 12:00,,PT_Normal,,,,,mk+YTgjO9kSCNeQDqHyFPw,FnjnSPuQ8EGpxBoPL3gghg,,,N,0,0,,,2013-11-05 11:09,2013-11-05 11:09,admin,admin,
227,101944,4512,26135,6590,0,N,N,N,CP_Drtn,TT_Task,DT_FixedDUR2,TK_NotStart,JF721.210,Fit-Up,,1352,0,80,0,0,0,80,0,0,0,,,,2013-02-26 12:00,2013-03-06 17:00,,2012-10-03 08:00,2012-10-11 13:00,2012-10-03 08:00,2012-10-11 13:00,2012-10-03 08:00,2012-10-11 13:00,2013-02-26 12:00,2013-03-06 17:00,,PT_Normal,,,,,Eiko8xSFK0y6GwIq2z+T2g,2Avp9YRmPUmCASJKMgeCLg,,,N,0,0,,,2013-11-05 11:09,2013-11-05 11:09,admin,admin,
228,101945,4512,26135,6590,0,N,N,N,CP_Drtn,TT_Task,DT_FixedDUR2,TK_NotStart,JF721.211,Welding,,1352,0,56,0,0,0,56,0,0,0,,,,2013-03-07 07:00,2013-03-13 08:00,,2012-10-11 13:00,2012-10-17 14:00,2012-10-11 13:00,2012-10-17 14:00,2012-10-11 13:00,2012-10-17 14:00,2013-03-07 07:00,2013-03-13 08:00,,PT_Normal,,,,,EIxSAFMKLEmVm5zNf1FFNA,fKb7wQneJkSqokYzrd7Ntg,,,N,0,0,,,2013-11-05 11:09,2013-11-05 11:09,admin,admin,
229,101946,4512,26135,6590,0,N,N,N,CP_Drtn,TT_Task,DT_FixedDUR2,TK_NotStart,JF721.212,Blasting/Painting,,1352,0,56,0,0,0,56,0,0,0,,,,2013-03-12 10:00,2013-03-18 11:00,,2012-10-16 16:00,2012-10-22 17:00,2012-10-16 16:00,2012-10-22 17:00,2012-10-16 16:00,2012-10-22 17:00,2013-03-12 10:00,2013-03-18 11:00,,PT_Normal,,,,,Og3BJsKH6UeR4N9ggugKZw,BwP2ymGIUU+c2fXN6sVgJg,,,N,0,0,,,2013-11-05 11:09,2013-11-05 11:09,admin,admin,
230,101947,4512,26135,6590,0,N,N,N,CP_Drtn,TT_Task,DT_FixedDUR2,TK_NotStart,JF721.213,Inspect & Accept for use,,1352,0,32,0,0,0,32,0,0,0,,,,2013-03-18 11:00,2013-03-21 13:00,,2012-10-23 07:00,2012-10-28 09:00,2012-10-23 07:00,2012-10-28 09:00,2012-10-23 07:00,2012-10-28 09:00,2013-03-18 11:00,2013-03-21 13:00,,PT_Normal,,,,,hFmtstXYBUi89yQbUf9Qhw,o+wMiGtSoUKh2J48Anp8Dw,,,N,0,0,,,2013-11-05 11:09,2013-11-05 11:09,admin,admin,
231,101948,4512,26095,6590,0,N,N,N,CP_Drtn,TT_Task,DT_FixedDUR2,TK_NotStart,JF721.214,"Annular,Bottom & Sump",,352,0,24,0,0,0,24,0,0,0,,,,2012-10-24 13:00,2012-10-28 17:00,,2012-09-16 16:00,2012-09-19 10:00,2012-09-16 16:00,2012-09-19 10:00,2012-09-16 16:00,2012-09-19 10:00,2012-10-24 13:00,2012-10-28 17:00,,PT_Normal,,,,,Yyfn5vn+D0aGchbEe99tEQ,aL93bd7K20m30+6GK2mPUA,,,N,0,0,,,2013-11-05 11:09,2013-11-05 11:09,admin,admin,
232,101949,4512,26095,6590,0,N,N,N,CP_Drtn,TT_Task,DT_FixedDUR2,TK_NotStart,JF721.215,"Shell Courses #1,#2,#3,#4",,784,432,64,0,0,0,64,0,0,0,,,,2012-12-15 12:00,2012-12-22 11:00,,2012-09-20 08:00,2012-09-26 17:00,2012-09-20 08:00,2012-09-26 17:00,2012-09-20 08:00,2012-09-26 17:00,2012-12-15 12:00,2012-12-22 11:00,,PT_Normal,,,,,RqMZdxCffkSFbo4Ocj0WNg,mb+jkI/ywU6UywP62LUheA,,,N,0,0,,,2013-11-05 11:09,2013-11-05 11:09,admin,admin,
233,101950,4512,26095,6590,0,N,N,N,CP_Drtn,TT_Task,DT_FixedDUR2,TK_NotStart,JF721.216,Shell Nozzles & Manholes,,1184,832,48,0,0,0,48,0,0,0,,,,2013-02-04 09:00,2013-02-09 12:00,,2012-09-29 08:00,2012-10-03 16:00,2012-09-29 08:00,2012-10-03 16:00,2012-09-29 08:00,2012-10-03 16:00,2013-02-04 09:00,2013-02-09 12:00,,PT_Normal,,,,,xIreRfZO4EWWGxFIubiNNw,bYPwWiI3GUaFTpFne1xHmA,,,N,0,0,,,2013-11-05 11:09,2013-11-05 11:09,admin,admin,
234,101951,4512,26095,6590,0,N,N,N,CP_Drtn,TT_Task,DT_FixedDUR2,TK_NotStart,JF721.217,"Platforms,Stairs & Handrails",,1352,1000,64,0,0,0,64,0,0,0,,,,2013-03-21 13:00,2013-03-28 12:00,,2012-10-28 09:00,2012-11-04 08:00,2012-10-28 09:00,2012-11-04 08:00,2012-10-28 09:00,2012-11-04 08:00,2013-03-21 13:00,2013-03-28 12:00,,PT_Normal,,,,,hX3AI2umUEymqxn198rjUg,dfbbgYeH70W47Yg9e8OhUw,,,N,0,0,,,2013-11-05 11:09,2013-11-05 11:09,admin,admin,
235,101952,4512,26095,6590,0,N,N,N,CP_Drtn,TT_Task,DT_FixedDUR2,TK_NotStart,JF721.218,Pipes & Fittings,,560,0,32,0,0,0,32,0,0,0,,,,2012-10-23 15:00,2012-10-28 17:00,,2012-08-24 12:30,2012-08-27 17:00,2012-08-24 12:30,2012-08-27 17:00,2012-08-24 12:30,2012-08-27 17:00,2012-10-23 15:00,2012-10-28 17:00,,PT_Normal,,,,,ya5rSYAuuke5X1I/wzKmWw,kpaaWoNQ0Ue6jietlQ5Z5Q,,,N,0,0,,,2013-11-05 11:09,2013-11-05 11:09,admin,admin,
236,101953,4512,26095,6590,0,N,N,N,CP_Drtn,TT_Task,DT_FixedDUR2,TK_NotStart,JF721.219,Aluminum Dome Roof,,1272,920,736.016667,0,0,0,736.016667,0,0,0,,,,2013-01-08 11:00,2013-03-27 14:01,,2012-08-22 14:00,2012-11-11 15:01,2012-08-22 14:00,2012-11-11 15:01,2012-08-22 14:00,2012-11-11 15:01,2013-01-08 11:00,2013-03-27 14:01,,PT_Normal,,,,,Vi5lDV4ZnU+5347gj+9n1g,fvBVTZnUAEe8LmzFstdm6w,,,N,0,0,,,2013-11-05 11:09,2013-11-05 11:09,admin,admin,
237,101954,4512,26095,6590,0,N,N,N,CP_Drtn,TT_Task,DT_FixedDUR2,TK_NotStart,JF721.220,Paint Material,,648,88,32,0,0,0,32,0,0,0,,,,2012-10-23 15:00,2012-10-28 17:00,,2012-08-12 07:00,2012-08-15 09:00,2012-08-12 07:00,2012-08-15 09:00,2012-08-12 07:00,2012-08-15 09:00,2012-10-23 15:00,2012-10-28 17:00,,PT_Normal,,,,,dQunSk2zpk++a5JoCiJ8qQ,NMnPTBgk00ygxxX6Jhgwmg,,,N,0,0,,,2013-11-05 11:09,2013-11-05 11:09,admin,admin,
238,101955,4512,26096,6590,0,N,N,N,CP_Drtn,TT_FinMile,DT_FixedDrtn,TK_NotStart,2.5,"Material Requisition approval for Steel plates, Cathodic Protection, field instruments etc.",,560,0,0,0,0,0,0,0,0,0,,,,2012-09-29 08:00,2012-09-29 08:00,,2012-07-27 10:30,2012-07-27 10:30,2012-07-27 10:30,2012-07-27 10:30,2012-07-27 10:30,2012-07-27 10:30,2012-09-29 08:00,2012-09-29 08:00,,PT_Normal,,,,,g9O0Ytx+lUWWMwPMlRXWWQ,D5gGLR/qa02xQYEG0L+bdQ,,,N,0,0,,,2013-11-05 11:09,2013-11-05 11:09,admin,admin,
239,101956,4512,26097,6590,0,N,N,N,CP_Drtn,TT_FinMile,DT_FixedDrtn,TK_NotStart,2.6,Purchase Order placement for Major Materials,,1272,0,0,0,0,0,0,0,0,0,,,,2013-01-08 11:00,2013-01-08 11:00,,2012-08-22 14:00,2012-08-22 14:00,2012-08-22 14:00,2012-08-22 14:00,2012-08-22 14:00,2012-08-22 14:00,2013-01-08 11:00,2013-01-08 11:00,,PT_Normal,,,,,3ZXZVzRNbkaRnyg0fFRXAw,HIEpMWnkHUm90Oy+flON2A,,,N,0,0,,,2013-11-05 11:09,2013-11-05 11:09,admin,admin,
240,101957,4512,26098,6590,0,N,N,N,CP_Drtn,TT_FinMile,DT_FixedDrtn,TK_NotStart,2.11,Complete Installation of Cathodic Protection,,352,0,0,0,0,0,0,0,0,0,,,,2013-06-20 08:00,2013-06-20 08:00,,2013-05-13 11:00,2013-05-13 11:00,2013-05-13 11:00,2013-05-13 11:00,2013-05-13 11:00,2013-05-13 11:00,2013-06-20 08:00,2013-06-20 08:00,,PT_Normal,,,,,UswmUjZvQk2Qp3bJrl+TeQ,,,,N,0,0,,,2013-11-05 11:09,2013-11-05 11:09,admin,admin,
241,101958,4512,26099,6590,0,N,N,N,CP_Drtn,TT_FinMile,DT_FixedDrtn,TK_NotStart,2.8,Supply of MAterial to Site,,560,208,0,0,0,0,0,0,0,0,,,,2012-10-28 17:00,2012-10-28 17:00,,2012-08-27 17:00,2012-08-27 17:00,2012-08-27 17:00,2012-08-27 17:00,2012-08-27 17:00,2012-08-27 17:00,2012-10-28 17:00,2012-10-28 17:00,,PT_Normal,,,,,v2AG7bs9+ESyMZ/dnEk2gA,,,,N,0,0,,,2013-11-05 11:09,2013-11-05 11:09,admin,admin,
242,101959,4512,26141,6590,0,N,N,N,CP_Drtn,TT_FinMile,DT_FixedDrtn,TK_NotStart,2.12,Complete Installation for instruments,,352,0,0,0,0,0,0,0,0,0,,,,2013-07-16 16:00,2013-07-16 16:00,,2013-06-09 09:00,2013-06-09 09:00,2013-06-09 09:00,2013-06-09 09:00,2013-06-09 09:00,2013-06-09 09:00,2013-07-16 16:00,2013-07-16 16:00,,PT_Normal,,,,,Fep/Jh9iq0q7rJjBERu/6Q,,,,N,0,0,,,2013-11-05 11:09,2013-11-05 11:09,admin,admin,
243,101960,4512,26143,6590,0,N,N,N,CP_Drtn,TT_Task,DT_FixedDUR2,TK_NotStart,JF721.242,Prepare Shell Course # 2 for Erection,6951,352,0,32,0,190,190,32,30,0,30,,,,2012-12-30 08:00,2013-01-02 10:00,,2012-11-21 16:00,2012-11-25 13:00,2012-11-21 16:00,2012-11-25 13:00,2012-11-21 16:00,2012-11-25 13:00,2012-12-30 08:00,2013-01-02 10:00,,PT_Normal,,,,,Tzn4/qip60iQZGw/cToXGA,znGT1AiRzUexYVr8dhKCng,,,N,0,0,,,2013-11-05 11:09,2013-11-05 11:09,admin,admin,
244,101961,4512,26143,6590,0,N,N,N,CP_Drtn,TT_Task,DT_FixedDUR2,TK_NotStart,JF721.243,Erect & Tack Shell Course # 2,6951,352,0,40,0,300,300,40,80,0,80,,,,2013-01-02 10:00,2013-01-06 15:00,,2012-11-25 13:00,2012-11-29 13:00,2012-11-25 13:00,2012-11-29 13:00,2012-11-25 13:00,2012-11-29 13:00,2013-01-02 10:00,2013-01-06 15:00,,PT_Normal,,,,,KvrqZeihg0S4wrNJaBjGSQ,S0FZWc0Rh0uCp9rpJu0UFw,,,N,0,0,,,2013-11-05 11:09,2013-11-05 11:09,admin,admin,
245,101962,4512,26143,6590,0,N,N,N,CP_Drtn,TT_Task,DT_FixedDUR2,TK_NotStart,JF721.244,Weld Outer Vertical Seam,6935,352,0,48,0,660,660,48,360,0,360,,,,2013-01-03 08:00,2013-01-08 11:00,,2012-11-26 11:00,2012-12-01 14:00,2012-11-26 11:00,2012-12-01 14:00,2012-11-26 11:00,2012-12-01 14:00,2013-01-03 08:00,2013-01-08 11:00,,PT_Normal,,,,,mWyEPqNHsECu880lK11RIQ,02x2RGlq8UyrSQ1smyHvXA,,,N,0,0,,,2013-11-05 11:09,2013-11-05 11:09,admin,admin,
246,101963,4512,26143,6590,0,N,N,N,CP_Drtn,TT_Task,DT_FixedDUR2,TK_NotStart,JF721.245,Backgouge & NDT Inside Vertical Seam,6964,352,0,40,0,220,220,40,40,0,40,,,,2013-01-03 16:00,2013-01-08 11:00,,2012-11-27 09:00,2012-12-01 14:00,2012-11-27 09:00,2012-12-01 14:00,2012-11-27 09:00,2012-12-01 14:00,2013-01-03 16:00,2013-01-08 11:00,,PT_Normal,,,,,XmR16V/HakWmoa/bccUrkQ,OTH2MBl8/0+b90QwPRl6HA,,,N,0,0,,,2013-11-05 11:09,2013-11-05 11:09,admin,admin,
247,101964,4512,26143,6590,0,N,N,N,CP_Drtn,TT_Task,DT_FixedDUR2,TK_NotStart,JF721.246,Weld Inside Vertical Seam,6935,352,0,40,0,460,460,40,280,0,280,,,,2013-01-05 09:00,2013-01-09 09:00,,2012-11-28 07:00,2012-12-02 12:00,2012-11-28 07:00,2012-12-02 12:00,2012-11-28 07:00,2012-12-02 12:00,2013-01-05 09:00,2013-01-09 09:00,,PT_Normal,,,,,2UIvHSGz2k+bOMZg02yrdA,RfSppuVpEkauvhzPvVlSOQ,,,N,0,0,,,2013-11-05 11:09,2013-11-05 11:09,admin,admin,
248,101965,4512,26143,6590,0,N,N,N,CP_Drtn,TT_Task,DT_FixedDUR2,TK_NotStart,JF721.247,"""""Fit & Tack Horizontal Seam between Shell Course # 1 & 2""""",6942,352,0,40,0,400,400,40,120,0,120,,,,2013-01-06 07:00,2013-01-09 17:00,,2012-11-28 15:00,2012-12-03 10:00,2012-11-28 15:00,2012-12-03 10:00,2012-11-28 15:00,2012-12-03 10:00,2013-01-06 07:00,2013-01-09 17:00,,PT_Normal,,,,,fRi++1wIUE2I1Hy5cmMF8A,i+siZMRFOEWWPhpzGgTm/A,,,N,0,0,,,2013-11-05 11:09,2013-11-05 11:09,admin,admin,
249,101966,4512,26143,6590,0,N,N,N,CP_Drtn,TT_Task,DT_FixedDUR2,TK_NotStart,JF721.248,"""""Weld Outer Horizontal Seam between Shell Course # 1 & 2""""",6942,352,0,56,0,1200,1200,56,680,0,680,,,,2013-01-06 15:00,2013-01-12 16:00,,2012-11-29 13:00,2012-12-05 14:00,2012-11-29 13:00,2012-12-05 14:00,2012-11-29 13:00,2012-12-05 14:00,2013-01-06 15:00,2013-01-12 16:00,,PT_Normal,,,,,EiaJeX4EEUCN0qcauOCpvw,nmGtj9Je2EqNDoqQVv1N1g,,,N,0,0,,,2013-11-05 11:09,2013-11-05 11:09,admin,admin,
250,101967,4512,26143,6590,0,N,N,N,CP_Drtn,TT_Task,DT_FixedDUR2,TK_NotStart,JF721.249,"""""Backgouge & NDT Inside Horizontal Seam between Shell Course# 1 & 2""""",6935,352,0,40,0,320,320,40,40,0,40,,,,2013-01-07 13:00,2013-01-12 08:00,,2012-11-30 13:30,2012-12-04 16:00,2012-11-30 13:30,2012-12-04 16:00,2012-11-30 13:30,2012-12-04 16:00,2013-01-07 13:00,2013-01-12 08:00,,PT_Normal,,,,,Jaq2cKqYjEmDsm/OuGIWFA,sy+IrWUhXkughQFX+iL5XA,,,N,0,0,,,2013-11-05 11:09,2013-11-05 11:09,admin,admin,
251,101968,4512,26143,6590,0,N,N,N,CP_Drtn,TT_Task,DT_FixedDUR2,TK_NotStart,JF721.250,"Weld Inner Horizontal Seam between Shell Course # 1 & 2""""",6935,352,0,40,0,600,600,40,340,0,340,,,,2013-01-08 11:00,2013-01-12 16:00,,2012-12-01 14:00,2012-12-05 14:00,2012-12-01 14:00,2012-12-05 14:00,2012-12-01 14:00,2012-12-05 14:00,2013-01-08 11:00,2013-01-12 16:00,,PT_Normal,,,,,Oy9UmNg2VEStQMB0arp7Yw,V2cmtQD/9kqksXaVitT7Pg,,,N,0,0,,,2013-11-05 11:09,2013-11-05 11:09,admin,admin,
252,101969,4512,26103,6590,0,N,N,N,CP_Drtn,TT_Task,DT_FixedDUR2,TK_NotStart,JF721.251,Prepare Shell Course # 3 for Erection,6942,352,0,40,0,180,180,40,30,0,30,,,,2013-01-08 11:00,2013-01-12 16:00,,2012-12-01 14:00,2012-12-05 14:00,2012-12-01 14:00,2012-12-05 14:00,2012-12-01 14:00,2012-12-05 14:00,2013-01-08 11:00,2013-01-12 16:00,,PT_Normal,,,,,5kmZzEUn2EWc6COKhmKe0w,0dF8XEJAR0um2y0CtZrHCA,,,N,0,0,,,2013-11-05 11:09,2013-11-05 11:09,admin,admin,
253,101970,4512,26103,6590,0,N,N,N,CP_Drtn,TT_Task,DT_FixedDUR2,TK_NotStart,JF721.252,Erect & Tack Shell Course # 3,6951,352,0,40,0,360,360,40,140,0,140,,,,2013-01-12 16:00,2013-01-16 16:00,,2012-12-05 14:00,2012-12-10 09:00,2012-12-05 14:00,2012-12-10 09:00,2012-12-05 14:00,2012-12-10 09:00,2013-01-12 16:00,2013-01-16 16:00,,PT_Normal,,,,,P6kYcQ0IsUiK6wxHBEUv9g,zAQOLeothkewiBEgPtyU3w,,,N,0,0,,,2013-11-05 11:09,2013-11-05 11:09,admin,admin,
254,101971,4512,26103,6590,0,N,N,N,CP_Drtn,TT_Task,DT_FixedDUR2,TK_NotStart,JF721.253,Weld Outer Vertical Seam,6965,352,0,48,0,645,645,48,420,0,420,,,,2013-01-13 14:00,2013-01-18 14:30,,2012-12-06 12:00,2012-12-11 15:00,2012-12-06 12:00,2012-12-11 15:00,2012-12-06 12:00,2012-12-11 15:00,2013-01-13 14:00,2013-01-18 14:30,,PT_Normal,,,,,u27XnwsIS0+g3m1aAa47ZQ,vwMCXD/taEyiVqs1zuTkSg,,,N,0,0,,,2013-11-05 11:09,2013-11-05 11:09,admin,admin,
255,101972,4512,26103,6590,0,N,N,N,CP_Drtn,TT_Task,DT_FixedDUR2,TK_NotStart,JF721.254,Backgouge & NDT Inside Vertical Seam,6942,352,0,40,0,260,260,40,40,0,40,,,,2013-01-14 12:00,2013-01-18 14:30,,2012-12-07 12:30,2012-12-11 15:00,2012-12-07 12:30,2012-12-11 15:00,2012-12-07 12:30,2012-12-11 15:00,2013-01-14 12:00,2013-01-18 14:30,,PT_Normal,,,,,ZPfsNaWnt0ifDKLzwL3+dw,FkRXA7HHrUuzrqNxnnIPWQ,,,N,0,0,,,2013-11-05 11:09,2013-11-05 11:09,admin,admin,
256,101973,4512,26103,6590,0,N,N,N,CP_Drtn,TT_Task,DT_FixedDUR2,TK_NotStart,JF721.255,Weld Inside Vertical Seam,6942,352,0,40,0,440,440,40,220,0,220,,,,2013-01-15 10:00,2013-01-19 15:00,,2012-12-08 13:00,2012-12-12 13:00,2012-12-08 13:00,2012-12-12 13:00,2012-12-08 13:00,2012-12-12 13:00,2013-01-15 10:00,2013-01-19 15:00,,PT_Normal,,,,,1eha6g24qkCRzqH3IqXySQ,Z68p+vy+CEihIDlquyT8Bw,,,N,0,0,,,2013-11-05 11:09,2013-11-05 11:09,admin,admin,
257,101974,4512,26103,6590,0,N,N,N,CP_Drtn,TT_Task,DT_FixedDUR2,TK_NotStart,JF721.256,"""""Fit & Tack Horizontal Seam between Shell Course # 2 & 3""""",6942,352,0,40,0,300,300,40,80,0,80,,,,2013-01-16 08:00,2013-01-20 13:00,,2012-12-09 11:00,2012-12-13 11:00,2012-12-09 11:00,2012-12-13 11:00,2012-12-09 11:00,2012-12-13 11:00,2013-01-16 08:00,2013-01-20 13:00,,PT_Normal,,,,,+hTqGsOfHkWMo+mVIfFwRQ,yO4QpAPPZUm/ZuKMLUlwxA,,,N,0,0,,,2013-11-05 11:09,2013-11-05 11:09,admin,admin,
258,101975,4512,26103,6590,0,N,N,N,CP_Drtn,TT_Task,DT_FixedDUR2,TK_NotStart,JF721.257,"""""Weld Outer Horizontal Seam between Shell Course # 2 & 3""""",6942,352,0,56,0,760,760,56,440,0,440,,,,2013-01-16 16:00,2013-01-22 17:00,,2012-12-10 09:00,2012-12-16 10:00,2012-12-10 09:00,2012-12-16 10:00,2012-12-10 09:00,2012-12-16 10:00,2013-01-16 16:00,2013-01-22 17:00,,PT_Normal,,,,,QTwr0wR4sk+nBAdNBz82Pw,FqAnNlhx/Uaj83WHY9IKxg,,,N,0,0,,,2013-11-05 11:09,2013-11-05 11:09,admin,admin,
259,101976,4512,26103,6590,0,N,N,N,CP_Drtn,TT_Task,DT_FixedDUR2,TK_NotStart,JF721.258,"""""Backgouge & NDT Inside Horizontal Seam between Shell Course# 2 & 3""""",6942,352,0,40,0,220,220,40,40,0,40,,,,2013-01-17 14:00,2013-01-22 09:00,,2012-12-11 07:00,2012-12-15 12:00,2012-12-11 07:00,2012-12-15 12:00,2012-12-11 07:00,2012-12-15 12:00,2013-01-17 14:00,2013-01-22 09:00,,PT_Normal,,,,,ThSHY9k98UymW6o/JVK3pg,9YqBeljKO0qZKYRZnZ9kzA,,,N,0,0,,,2013-11-05 11:09,2013-11-05 11:09,admin,admin,
260,101977,4512,26103,6590,0,N,N,N,CP_Drtn,TT_Task,DT_FixedDUR2,TK_NotStart,JF721.259,"Weld Inner Horizontal Seam between Shell Course # 2 & 3""""",6942,352,0,40,0,360,360,40,220,0,220,,,,2013-01-19 07:00,2013-01-22 17:00,,2012-12-11 15:00,2012-12-16 10:00,2012-12-11 15:00,2012-12-16 10:00,2012-12-11 15:00,2012-12-16 10:00,2013-01-19 07:00,2013-01-22 17:00,,PT_Normal,,,,,RsyE2fvXkUyEBksbcGxcQw,AYzaOzcC+0SVspGFh3omtg,,,N,0,0,,,2013-11-05 11:09,2013-11-05 11:09,admin,admin,
261,101978,4512,26104,6590,0,N,N,N,CP_Drtn,TT_Task,DT_FixedDUR2,TK_NotStart,JF721.260,Prepare Shell Course # 4 for Erection,6942,352,0,32,0,130,130,32,30,0,30,,,,2013-01-23 07:00,2013-01-26 14:00,,2012-12-16 10:00,2012-12-19 12:00,2012-12-16 10:00,2012-12-19 12:00,2012-12-16 10:00,2012-12-19 12:00,2013-01-23 07:00,2013-01-26 14:00,,PT_Normal,,,,,hyJ6ZsKF4kuRMHrefGtkVA,Bh8dUtSXV0e+Ksnyty3PvQ,,,N,0,0,,,2013-11-05 11:09,2013-11-05 11:09,admin,admin,
262,101979,4512,26104,6590,0,N,N,N,CP_Drtn,TT_Task,DT_FixedDUR2,TK_NotStart,JF721.261,Erect & Tack Shell Course # 4,6965,352,0,40,0,260,260,40,120,0,120,,,,2013-01-26 14:00,2013-01-29 16:00,,2012-12-19 12:00,2012-12-23 17:00,2012-12-19 12:00,2012-12-23 17:00,2012-12-19 12:00,2012-12-23 17:00,2013-01-26 14:00,2013-01-29 16:00,,PT_Normal,,,,,x0notrap4EGbjQewITxo0g,FnpgCCzPpk6P25YAzjb7FA,,,N,0,0,,,2013-11-05 11:09,2013-11-05 11:09,admin,admin,
263,101980,4512,26104,6590,0,N,N,N,CP_Drtn,TT_Task,DT_FixedDUR2,TK_NotStart,JF721.262,Weld Outer Vertical Seam,6942,352,0,48,0,600,600,48,330,0,330,,,,2013-01-27 11:00,2013-01-31 12:00,,2012-12-20 10:00,2012-12-25 13:00,2012-12-20 10:00,2012-12-25 13:00,2012-12-20 10:00,2012-12-25 13:00,2013-01-27 11:00,2013-01-31 12:00,,PT_Normal,,,,,UDWWgnmlg02VV7leKSl1/w,5cVgI51C00+1j2h27EgbEw,,,N,0,0,,,2013-11-05 11:09,2013-11-05 11:09,admin,admin,
264,101981,4512,26104,6590,0,N,N,N,CP_Drtn,TT_Task,DT_FixedDUR2,TK_NotStart,JF721.263,Backgouge & NDT Inside Vertical Seam,6942,352,0,40,0,180,180,40,40,0,40,,,,2013-01-27 19:00,2013-01-31 12:00,,2012-12-21 10:30,2012-12-25 13:00,2012-12-21 10:30,2012-12-25 13:00,2012-12-21 10:30,2012-12-25 13:00,2013-01-27 19:00,2013-01-31 12:00,,PT_Normal,,,,,y2vru7DoFU6ytm+z5GyBMw,oNcenL9t7kmxM4cI6cnKHA,,,N,0,0,,,2013-11-05 11:09,2013-11-05 11:09,admin,admin,
265,101982,4512,26104,6590,0,N,N,N,CP_Drtn,TT_Task,DT_FixedDUR2,TK_NotStart,JF721.264,Weld Inside Vertical Seam,6935,352,0,40,0,280,280,40,160,0,160,,,,2013-01-28 10:00,2013-02-01 12:30,,2012-12-22 11:00,2012-12-26 11:00,2012-12-22 11:00,2012-12-26 11:00,2012-12-22 11:00,2012-12-26 11:00,2013-01-28 10:00,2013-02-01 12:30,,PT_Normal,,,,,E/yhhRtK4kWMJTimlhO/jQ,AOO+KXYiykWoBvXrHLTISg,,,N,0,0,,,2013-11-05 11:09,2013-11-05 11:09,admin,admin,
266,101983,4512,26104,6590,0,N,N,N,CP_Drtn,TT_Task,DT_FixedDUR2,TK_NotStart,JF721.265,"""""Fit & Tack Horizontal Seam between Shell Course # 3 & 4""""",6942,352,0,40,0,240,240,40,100,0,100,,,,2013-01-29 08:00,2013-02-02 13:00,,2012-12-23 09:00,2012-12-27 09:00,2012-12-23 09:00,2012-12-27 09:00,2012-12-23 09:00,2012-12-27 09:00,2013-01-29 08:00,2013-02-02 13:00,,PT_Normal,,,,,wmbv20HPXEeWtr8/tDRIdg,f+uNhvTdY0W8iTmTyN0P+Q,,,N,0,0,,,2013-11-05 11:09,2013-11-05 11:09,admin,admin,
267,101984,4512,26104,6590,0,N,N,N,CP_Drtn,TT_Task,DT_FixedDUR2,TK_NotStart,JF721.266,Weld Outer Horizontal Seam between Shell Course # 3 & 4,6942,352,0,56,0,520,520,56,280,0,280,,,,2013-01-29 16:00,2013-02-04 17:00,,2012-12-24 07:00,2012-12-30 08:00,2012-12-24 07:00,2012-12-30 08:00,2012-12-24 07:00,2012-12-30 08:00,2013-01-29 16:00,2013-02-04 17:00,,PT_Normal,,,,,wYB8j5kQGkCARcib0SNu0g,a4866ZCB9k6LY3zXWAxauA,,,N,0,0,,,2013-11-05 11:09,2013-11-05 11:09,admin,admin,
268,101985,4512,26104,6590,0,N,N,N,CP_Drtn,TT_Task,DT_FixedDUR2,TK_NotStart,JF721.267,"""""Backgouge & NDT Inside Horizontal Seam between Shell Course# 3 & 4""""",6942,352,0,40,0,160,160,40,40,0,40,,,,2013-01-30 14:00,2013-02-04 09:00,,2012-12-24 15:00,2012-12-29 10:00,2012-12-24 15:00,2012-12-29 10:00,2012-12-24 15:00,2012-12-29 10:00,2013-01-30 14:00,2013-02-04 09:00,,PT_Normal,,,,,R8mrY1v+JUOB/BrCs0wZ9Q,oDIcQgrhIE2BT2X6ZhNrdw,,,N,0,0,,,2013-11-05 11:09,2013-11-05 11:09,admin,admin,
269,101986,4512,26104,6590,0,N,N,N,CP_Drtn,TT_Task,DT_FixedDUR2,TK_NotStart,JF721.268,"Weld Inner Horizontal Seam between Shell Course # 3 & 4""""",6942,352,0,40,0,320,320,40,220,0,220,,,,2013-01-31 12:00,2013-02-04 17:00,,2012-12-25 13:00,2012-12-30 08:00,2012-12-25 13:00,2012-12-30 08:00,2012-12-25 13:00,2012-12-30 08:00,2013-01-31 12:00,2013-02-04 17:00,,PT_Normal,,,,,PtDB5yamEUC7j80TfjVR1w,IlZcypqrkkiT7vWvdYTU7Q,,,N,0,0,,,2013-11-05 11:09,2013-11-05 11:09,admin,admin,
270,101987,4512,26104,6590,0,N,N,N,CP_Drtn,TT_Task,DT_FixedDUR2,TK_NotStart,JF721.269,"Fit, Weld Shell Course # 1 Annular Plate & Oil Test",6964,552,200,72,0,1140,1140,72,360,0,360,,,,2013-01-23 07:00,2013-01-29 16:00,,2012-11-24 15:00,2012-12-02 12:00,2012-11-24 15:00,2012-12-02 12:00,2012-11-24 15:00,2012-12-02 12:00,2013-01-23 07:00,2013-01-29 16:00,,PT_Normal,,,,,iDGLjUYcoUqDxqz0W6UlwQ,Hd3Cw6x4qkutEzo1wLhJHQ,,,N,0,0,,,2013-11-05 11:09,2013-11-05 11:09,admin,admin,
271,101988,4512,26105,6590,0,N,N,N,CP_Drtn,TT_Task,DT_FixedDUR2,TK_NotStart,JF721.270,Erect & Tack Curve Angle,6942,352,0,40,0,240,240,40,100,0,100,,,,2013-02-05 07:00,2013-02-09 12:00,,2012-12-30 08:00,2013-01-03 08:00,2012-12-30 08:00,2013-01-03 08:00,2012-12-30 08:00,2013-01-03 08:00,2013-02-05 07:00,2013-02-09 12:00,,PT_Normal,,,,,uanh0W330UWs6iOX5TjOZw,4LEEoOCuY0O9LxelhKylNA,,,N,0,0,,,2013-11-05 11:09,2013-11-05 11:09,admin,admin,
272,101989,4512,26105,6590,0,N,N,N,CP_Drtn,TT_Task,DT_FixedDUR2,TK_NotStart,JF721.271,Weld Curve Angle,6942,352,0,56,0,720,720,56,440,0,440,,,,2013-02-09 12:00,2013-02-15 10:30,,2013-01-03 08:00,2013-01-09 09:00,2013-01-03 08:00,2013-01-09 09:00,2013-01-03 08:00,2013-01-09 09:00,2013-02-09 12:00,2013-02-15 10:30,,PT_Normal,,,,,qyN+4RWZVUmQgUVEx4dyVQ,mDvr2ryoH02BSTFTlZLUXg,,,N,0,0,,,2013-11-05 11:09,2013-11-05 11:09,admin,admin,
273,101990,4512,26106,6590,0,N,N,N,CP_Drtn,TT_Task,DT_FixedDUR2,TK_NotStart,JF721.272,MArk & Cut Holes,6964,352,0,48,0,270,270,48,90,0,90,,,,2013-02-09 12:00,2013-02-14 10:00,,2013-01-03 08:00,2013-01-08 11:00,2013-01-03 08:00,2013-01-08 11:00,2013-01-03 08:00,2013-01-08 11:00,2013-02-09 12:00,2013-02-14 10:00,,PT_Normal,,,,,M0rZbkjK+EOg6Q3/numu6w,KIGGf/WnD0ed22oKzp2sxw,,,N,0,0,,,2013-11-05 11:09,2013-11-05 11:09,admin,admin,
274,101991,4512,26106,6590,0,N,N,N,CP_Drtn,TT_Task,DT_FixedDUR2,TK_NotStart,JF721.273,"Fit & Tack Manholes ,Nozzles on Shell",6958,352,0,40,0,200,200,40,80,0,80,,,,2013-02-10 10:00,2013-02-14 10:00,,2013-01-03 16:00,2013-01-08 11:00,2013-01-03 16:00,2013-01-08 11:00,2013-01-03 16:00,2013-01-08 11:00,2013-02-10 10:00,2013-02-14 10:00,,PT_Normal,,,,,14DegSSP+0+n2xfLYMZsXA,rBcnUlW/60y/LAaEBzsSMw,,,N,0,0,,,2013-11-05 11:09,2013-11-05 11:09,admin,admin,
275,101992,4512,26106,6590,0,N,N,N,CP_Drtn,TT_Task,DT_FixedDUR2,TK_NotStart,JF721.274,Weld MAnholes & Nozzles on shell,6968,352,0,40,0,340,340,40,250,0,250,,,,2013-02-11 08:00,2013-02-15 10:30,,2013-01-05 09:00,2013-01-09 09:00,2013-01-05 09:00,2013-01-09 09:00,2013-01-05 09:00,2013-01-09 09:00,2013-02-11 08:00,2013-02-15 10:30,,PT_Normal,,,,,x867Y3ClBk2pNUGhRjC2bw,0KCSGwJNKU+tT+/YmtgeGA,,,N,0,0,,,2013-11-05 11:09,2013-11-05 11:09,admin,admin,
276,101993,4512,26106,6590,0,N,N,N,CP_Drtn,TT_Task,DT_FixedDUR2,TK_NotStart,JF721.275,NDT on Manholes & Nozzles on shell,6965,352,0,32,0,120,120,32,20,0,20,,,,2013-02-15 10:30,2013-02-18 15:00,,2013-01-09 09:00,2013-01-12 16:00,2013-01-09 09:00,2013-01-12 16:00,2013-01-09 09:00,2013-01-12 16:00,2013-02-15 10:30,2013-02-18 15:00,,PT_Normal,,,,,7LIYS0XDk0CRNEJu5jFTVw,8EilY1U3706EfnCqsOoftw,,,N,0,0,,,2013-11-05 11:09,2013-11-05 11:09,admin,admin,
277,101994,4512,26107,6590,0,N,N,N,CP_Drtn,TT_Task,DT_FixedDUR2,TK_NotStart,JF721.276,Prepare Tank for Roof Contruction,6914,352,0,48,0,390,390,48,90,0,90,,,,2013-02-15 10:30,2013-02-20 11:00,,2013-01-09 09:00,2013-01-14 12:00,2013-01-09 09:00,2013-01-14 12:00,2013-01-09 09:00,2013-01-14 12:00,2013-02-15 10:30,2013-02-20 11:00,,PT_Normal,,,,,VBtqytZGNEmsEVj+CvKyFA,lRS00tchZkqxfqnwTzxvGA,,,N,0,0,,,2013-11-05 11:09,2013-11-05 11:09,admin,admin,
278,101995,4512,26107,6590,0,N,N,N,CP_Drtn,TT_Task,DT_FixedDUR2,TK_NotStart,JF721.277,Install Shoe Support Structure on Shell,6964,352,0,64,0,800,800,64,300,0,300,,,,2013-02-20 11:00,2013-02-27 10:00,,2013-01-14 12:00,2013-01-21 11:00,2013-01-14 12:00,2013-01-21 11:00,2013-01-14 12:00,2013-01-21 11:00,2013-02-20 11:00,2013-02-27 10:00,,PT_Normal,,,,,pJ2tbKDRske/AJPla/2agQ,PbQ/co29dU+izHYm3twr6w,,,N,0,0,,,2013-11-05 11:09,2013-11-05 11:09,admin,admin,
279,101996,4512,26107,6590,0,N,N,N,CP_Drtn,TT_Task,DT_FixedDUR2,TK_NotStart,JF721.278,Install / Assemble Roof Rafters,6951,352,0,152,0,2720,2720,152,800,0,800,,,,2013-02-27 10:00,2013-03-15 14:30,,2013-01-21 11:00,2013-02-05 15:00,2013-01-21 11:00,2013-02-05 15:00,2013-01-21 11:00,2013-02-05 15:00,2013-02-27 10:00,2013-03-15 14:30,,PT_Normal,,,,,AwroIRcK80+N4v3A1P2y+Q,iIFBqAUwnkSEFCiOSVgkJQ,,,N,0,0,,,2013-11-05 11:09,2013-11-05 11:09,admin,admin,
280,101997,4512,26107,6590,0,N,N,N,CP_Drtn,TT_Task,DT_FixedDUR2,TK_NotStart,JF721.279,Installation of Roof Plates,6914,352,0,80,0,1050,1050,80,210,0,210,,,,2013-03-16 07:00,2013-03-24 12:00,,2013-02-05 15:00,2013-02-14 10:00,2013-02-05 15:00,2013-02-14 10:00,2013-02-05 15:00,2013-02-14 10:00,2013-03-16 07:00,2013-03-24 12:00,,PT_Normal,,,,,TGAGQHeLyk2GzxXxydCiBw,AzMvPn6voEGP9yR3lyt++Q,,,N,0,0,,,2013-11-05 11:09,2013-11-05 11:09,admin,admin,
281,101998,4512,26107,6590,0,N,N,N,CP_Drtn,TT_Task,DT_FixedDUR2,TK_NotStart,JF721.280,Install Roof Manholes & Nozzles,6942,352,0,40,0,340,340,40,100,0,100,,,,2013-03-24 12:00,2013-03-28 12:00,,2013-02-14 10:00,2013-02-18 15:00,2013-02-14 10:00,2013-02-18 15:00,2013-02-14 10:00,2013-02-18 15:00,2013-03-24 12:00,2013-03-28 12:00,,PT_Normal,,,,,eKA7jxJei0CFKJRyv2PHsg,XyLBxpvVO02nLeXXA/6jWA,,,N,0,0,,,2013-11-05 11:09,2013-11-05 11:09,admin,admin,
282,101999,4512,26149,6590,0,N,N,N,CP_Drtn,TT_Task,DT_FixedDUR2,TK_NotStart,JF721.281,"Erect & Fix Stairs, Handrails & Platforms on Shell",6942,352,0,56,0,720,720,56,240,0,240,,,,2013-03-28 12:00,2013-04-03 13:00,,2013-02-18 15:00,2013-02-24 16:00,2013-02-18 15:00,2013-02-24 16:00,2013-02-18 15:00,2013-02-24 16:00,2013-03-28 12:00,2013-04-03 13:00,,PT_Normal,,,,,rnTlJu0JyEuBwFJCYto9jA,5EyPUwMeTEmEfhHgV6rOaQ,,,N,0,0,,,2013-11-05 11:09,2013-11-05 11:09,admin,admin,
283,102000,4512,26149,6590,0,N,N,N,CP_Drtn,TT_Task,DT_FixedDUR2,TK_NotStart,JF721.282,Erect & Fix Roof Platforms & Handrails,6942,352,0,64,0,800,800,64,300,0,300,,,,2013-03-28 12:00,2013-04-04 11:00,,2013-02-18 15:00,2013-02-25 14:00,2013-02-18 15:00,2013-02-25 14:00,2013-02-18 15:00,2013-02-25 14:00,2013-03-28 12:00,2013-04-04 11:00,,PT_Normal,,,,,+s/UcTiH0Ui0pXnTfiLPQA,Lb5PVGvsWk2o3r/VbRiomA,,,N,0,0,,,2013-11-05 11:09,2013-11-05 11:09,admin,admin,
284,102001,4512,26150,6590,0,N,N,N,CP_Drtn,TT_Task,DT_FixedDUR2,TK_NotStart,JF721.283,Install Blind Flanges,6965,352,0,16,0,80,80,16,20,0,20,,,,2013-04-04 11:00,2013-04-06 12:00,,2013-02-25 14:00,2013-02-27 10:00,2013-02-25 14:00,2013-02-27 10:00,2013-02-25 14:00,2013-02-27 10:00,2013-04-04 11:00,2013-04-06 12:00,,PT_Normal,,,,,lEzt/5SKmUa1SZfYSe8foQ,bansJdM3X0yoUVEYaMB/xw,,,N,0,0,,,2013-11-05 11:09,2013-11-05 11:09,admin,admin,
285,102002,4512,26150,6590,0,N,N,N,CP_Drtn,TT_Task,DT_FixedDUR2,TK_NotStart,JF721.284,Tank Water Filling,6965,352,0,192,0,1460,1460,192,690,0,690,,,,2013-04-06 12:00,2013-04-27 09:00,,2013-02-27 10:00,2013-03-19 17:00,2013-02-27 10:00,2013-03-19 17:00,2013-02-27 10:00,2013-03-19 17:00,2013-04-06 12:00,2013-04-27 09:00,,PT_Normal,,,,,+I6iE1LHWUuTuDR/MH3GvA,Kh4mzvRJ7U6puAbF5H7xpQ,,,N,0,0,,,2013-11-05 11:09,2013-11-05 11:09,admin,admin,
286,102003,4512,26150,6590,0,N,N,N,CP_Drtn,TT_Task,DT_FixedDUR2,TK_NotStart,JF721.285,Hold Water for 48 Hours,6965,352,0,24,0,240,240,24,40,0,40,,,,2013-04-27 09:00,2013-04-29 13:00,,2013-03-20 07:00,2013-03-22 13:30,2013-03-20 07:00,2013-03-22 13:30,2013-03-20 07:00,2013-03-22 13:30,2013-04-27 09:00,2013-04-29 13:00,,PT_Normal,,,,,mP/kXya8CEeFGNp5sY789A,Hztw/9W0LUmVyvntp0hYYQ,,,N,0,0,,,2013-11-05 11:09,2013-11-05 11:09,admin,admin,
287,102004,4512,26150,6590,0,N,N,N,CP_Drtn,TT_Task,DT_FixedDUR2,TK_NotStart,JF721.286,Drain Water from Tank,6965,360,0,104,0,1560,1560,104,240,0,240,,,,2013-04-30 11:00,2013-05-11 15:00,,2013-03-22 13:30,2013-04-02 15:00,2013-03-22 13:30,2013-04-02 15:00,2013-03-22 13:30,2013-04-02 15:00,2013-04-30 11:00,2013-05-11 15:00,,PT_Normal,,,,,N/KVWGEKn0OLGVGi1LG/Xg,TICNOBkmHEGq2yaXZRVaLA,,,N,0,0,,,2013-11-05 11:09,2013-11-05 11:09,admin,admin,
288,102005,4512,26150,6590,0,N,N,N,CP_Drtn,TT_Task,DT_FixedDUR2,TK_NotStart,JF721.287,Clean & Dry Out Tank,6942,360,0,24,0,360,360,24,40,0,40,,,,2013-05-11 15:00,2013-05-14 09:00,,2013-04-02 15:00,2013-04-05 11:30,2013-04-02 15:00,2013-04-05 11:30,2013-04-02 15:00,2013-04-05 11:30,2013-05-11 15:00,2013-05-14 09:00,,PT_Normal,,,,,dNf5gRJL2UOT2UaCS1LjAg,U7W2RDXctU2pKuHyUnEDrg,,,N,0,0,,,2013-11-05 11:09,2013-11-05 11:09,admin,admin,
289,102006,4512,26110,6590,0,N,N,N,CP_Drtn,TT_Task,DT_FixedDUR2,TK_NotStart,JF721.288,Erect  Scafolding Outside Tank,6942,352,0,72,0,1120,1120,72,160,0,160,,,,2013-04-29 13:00,2013-05-07 10:00,,2013-03-22 13:30,2013-03-30 13:00,2013-03-22 13:30,2013-03-30 13:00,2013-03-22 13:30,2013-03-30 13:00,2013-04-29 13:00,2013-05-07 10:00,,PT_Normal,,,,,eBojnVHSCUq/2q7Yf8gA4w,NX0HJySfA0ee8dax3nEcVw,,,N,0,0,,,2013-11-05 11:09,2013-11-05 11:09,admin,admin,
290,102007,4512,26110,6590,0,N,N,N,CP_Drtn,TT_Task,DT_FixedDUR2,TK_NotStart,JF721.289,External Shell Blast & Prime,6950,352,0,40,0,600,600,40,80,0,80,,,,2013-05-07 10:00,2013-05-11 15:00,,2013-03-30 13:00,2013-04-03 13:00,2013-03-30 13:00,2013-04-03 13:00,2013-03-30 13:00,2013-04-03 13:00,2013-05-07 10:00,2013-05-11 15:00,,PT_Normal,,,,,sdtHTJADHkichehYSs5/tg,pmfMQhFbCk2DnuEWFOOGgw,,,N,0,0,,,2013-11-05 11:09,2013-11-05 11:09,admin,admin,
291,102008,4512,26110,6590,0,N,N,N,CP_Drtn,TT_Task,DT_FixedDUR2,TK_NotStart,JF721.290,External Shell Secondary & Final Coat,6965,352,0,40,0,600,600,40,80,0,80,,,,2013-05-08 08:00,2013-05-12 13:00,,2013-03-31 11:00,2013-04-04 11:00,2013-03-31 11:00,2013-04-04 11:00,2013-03-31 11:00,2013-04-04 11:00,2013-05-08 08:00,2013-05-12 13:00,,PT_Normal,,,,,tWX9opLHv0KbSzjor8nh9Q,LrXrl8VuZUKaDkTnCorn2w,,,N,0,0,,,2013-11-05 11:09,2013-11-05 11:09,admin,admin,
292,102009,4512,26110,6590,0,N,N,N,CP_Drtn,TT_Task,DT_FixedDUR2,TK_NotStart,JF721.291,External Shell Paint Inspection,6935,352,0,16,0,80,80,16,20,0,20,,,,2013-05-12 13:00,2013-05-14 09:00,,2013-04-04 11:00,2013-04-06 12:00,2013-04-04 11:00,2013-04-06 12:00,2013-04-04 11:00,2013-04-06 12:00,2013-05-12 13:00,2013-05-14 09:00,,PT_Normal,,,,,skoplMztwkG5VAZdWn0HIA,zNCSE9hsPU+w0PbWL4y0RQ,,,N,0,0,,,2013-11-05 11:09,2013-11-05 11:09,admin,admin,
293,102010,4512,26110,6590,0,N,N,N,CP_Drtn,TT_Task,DT_FixedDUR2,TK_NotStart,JF721.292,Dismantle External Scaffolding,6957,352,0,24,0,300,300,24,40,0,40,,,,2013-05-14 09:00,2013-05-16 13:00,,2013-04-06 12:00,2013-04-08 16:00,2013-04-06 12:00,2013-04-08 16:00,2013-04-06 12:00,2013-04-08 16:00,2013-05-14 09:00,2013-05-16 13:00,,PT_Normal,,,,,Qi9v7oW/10GQh7oXtUEguw,h8ZTaHGim0WHe47851X01g,,,N,0,0,,,2013-11-05 11:09,2013-11-05 11:09,admin,admin,
294,102011,4512,26111,6590,0,N,N,N,CP_Drtn,TT_Task,DT_FixedDUR2,TK_NotStart,JF721.293,Erect Scafolding Inside Tank,6942,360,8,56,0,900,900,56,120,0,120,,,,2013-05-14 09:00,2013-05-20 10:00,,2013-04-05 11:30,2013-04-11 10:00,2013-04-05 11:30,2013-04-11 10:00,2013-04-05 11:30,2013-04-11 10:00,2013-05-14 09:00,2013-05-20 10:00,,PT_Normal,,,,,SRBy6P0+s0CYv4hPPXAnRQ,vidy906DS0uiEq9Jcg/PUg,,,N,0,0,,,2013-11-05 11:09,2013-11-05 11:09,admin,admin,
295,102012,4512,26111,6590,0,N,N,N,CP_Drtn,TT_Task,DT_FixedDUR2,TK_NotStart,JF721.294,Internal Shell Blast & Prime,6949,352,0,32,0,480,480,32,60,0,60,,,,2013-05-16 13:00,2013-05-20 10:00,,2013-04-08 16:00,2013-04-12 10:30,2013-04-08 16:00,2013-04-12 10:30,2013-04-08 16:00,2013-04-12 10:30,2013-05-16 13:00,2013-05-20 10:00,,PT_Normal,,,,,VqJ5B5iou0q+9t3erunptQ,EcDxdvHaBEGzZrj34KuDLw,,,N,0,0,,,2013-11-05 11:09,2013-11-05 11:09,admin,admin,
296,102013,4512,26111,6590,0,N,N,N,CP_Drtn,TT_Task,DT_FixedDUR2,TK_NotStart,JF721.295,Internal Shell Secondary & Final Coat,6950,352,0,32,0,390,390,32,60,0,60,,,,2013-05-20 10:00,2013-05-23 12:00,,2013-04-12 10:30,2013-04-15 15:00,2013-04-12 10:30,2013-04-15 15:00,2013-04-12 10:30,2013-04-15 15:00,2013-05-20 10:00,2013-05-23 12:00,,PT_Normal,,,,,8fMI8I90HkOybTKJ4z8p5Q,wZGqCHL8t0WnxIy/M/19Uw,,,N,0,0,,,2013-11-05 11:09,2013-11-05 11:09,admin,admin,
297,102014,4512,26111,6590,0,N,N,N,CP_Drtn,TT_Task,DT_FixedDUR2,TK_NotStart,JF721.296,Internal Shell Paint Inspection,6965,352,0,16,0,70,70,16,20,0,20,,,,2013-05-20 10:00,2013-05-21 16:00,,2013-04-12 10:30,2013-04-14 09:00,2013-04-12 10:30,2013-04-14 09:00,2013-04-12 10:30,2013-04-14 09:00,2013-05-20 10:00,2013-05-21 16:00,,PT_Normal,,,,,imDar3phrU+mhhZhSuymQw,y9fO7Scg7E+e7C945Imudw,,,N,0,0,,,2013-11-05 11:09,2013-11-05 11:09,admin,admin,
298,102015,4512,26111,6590,0,N,N,N,CP_Drtn,TT_Task,DT_FixedDUR2,TK_NotStart,JF721.297,Dismantle Internal Scaffolding,6942,352,0,40,0,480,480,40,80,0,80,,,,2013-05-21 16:00,2013-05-26 11:00,,2013-04-14 09:00,2013-04-18 09:00,2013-04-14 09:00,2013-04-18 09:00,2013-04-14 09:00,2013-04-18 09:00,2013-05-21 16:00,2013-05-26 11:00,,PT_Normal,,,,,qzPi4D0oi0+Bbwz2k1ILCw,yu9LhqdEMkmwT1t857x5Tw,,,N,0,0,,,2013-11-05 11:09,2013-11-05 11:09,admin,admin,
299,102016,4512,26111,6590,0,N,N,N,CP_Drtn,TT_Task,DT_FixedDUR2,TK_NotStart,JF721.298,Bottom/Annular Plate Blast & Prime,6949,352,0,24,0,320,320,24,80,0,80,,,,2013-05-26 11:00,2013-05-28 15:00,,2013-04-18 09:00,2013-04-21 08:00,2013-04-18 09:00,2013-04-21 08:00,2013-04-18 09:00,2013-04-21 08:00,2013-05-26 11:00,2013-05-28 15:00,,PT_Normal,,,,,C2XvIlFb/U2WGdfMl/K3Fg,DbN3WnOHDECoEhhms9W2Yg,,,N,0,0,,,2013-11-05 11:09,2013-11-05 11:09,admin,admin,
300,102017,4512,26111,6590,0,N,N,N,CP_Drtn,TT_Task,DT_FixedDUR2,TK_NotStart,JF721.299,Bottom/Annular Plate Secondary & Final Coat,6950,352,0,24,0,260,260,24,80,0,80,,,,2013-05-28 15:00,2013-05-31 11:30,,2013-04-21 08:00,2013-04-23 12:00,2013-04-21 08:00,2013-04-23 12:00,2013-04-21 08:00,2013-04-23 12:00,2013-05-28 15:00,2013-05-31 11:30,,PT_Normal,,,,,e3ZVsNs3z0OGOVysueRSOA,5jQfhNzf/Uq3OARytNb6qw,,,N,0,0,,,2013-11-05 11:09,2013-11-05 11:09,admin,admin,
301,102018,4512,26111,6590,0,N,N,N,CP_Drtn,TT_Task,DT_FixedDUR2,TK_NotStart,JF721.300,Bottom/Annular Plate Paint Inspection,6942,352,0,16,0,120,120,16,40,0,40,,,,2013-05-31 11:30,2013-06-02 10:00,,2013-04-23 12:00,2013-04-25 08:00,2013-04-23 12:00,2013-04-25 08:00,2013-04-23 12:00,2013-04-25 08:00,2013-05-31 11:30,2013-06-02 10:00,,PT_Normal,,,,,4i1urzMPYkeoK48oPtCtnQ,t2L8aWgy5kSdkuqtYptyaw,,,N,0,0,,,2013-11-05 11:09,2013-11-05 11:09,admin,admin,
302,102019,4512,26112,6590,0,N,N,N,CP_Drtn,TT_Task,DT_FixedDUR2,TK_NotStart,JF721.301,Tanks lighting,6942,352,0,24,0,200,200,24,40,0,40,,,,2013-07-16 16:00,2013-07-19 12:30,,2013-06-09 09:00,2013-06-11 13:00,2013-06-09 09:00,2013-06-11 13:00,2013-06-09 09:00,2013-06-11 13:00,2013-07-16 16:00,2013-07-19 12:30,,PT_Normal,,,,,cyOqHnbCDky1wSa2Wb4MGg,7y5Qe1s210qmT+OEF38g9A,,,N,0,0,,,2013-11-05 11:09,2013-11-05 11:09,admin,admin,
303,102020,4512,26112,6590,0,N,N,N,CP_Drtn,TT_Task,DT_FixedDUR2,TK_NotStart,JF721.302,Tanks lighting  protection,6942,352,0,24,0,200,200,24,40,0,40,,,,2013-07-19 12:30,2013-07-22 09:00,,2013-06-11 13:00,2013-06-13 17:00,2013-06-11 13:00,2013-06-13 17:00,2013-06-11 13:00,2013-06-13 17:00,2013-07-19 12:30,2013-07-22 09:00,,PT_Normal,,,,,LBCrqI+hKkWJbVIMSDXFtQ,DDo+Xv7R+k66PRF1lFqpDQ,,,N,0,0,,,2013-11-05 11:09,2013-11-05 11:09,admin,admin,
304,102021,4512,26112,6590,0,N,N,N,CP_Drtn,TT_Task,DT_FixedDUR2,TK_NotStart,JF721.303,Grounding system,6942,352,0,24,0,160,160,24,40,0,40,,,,2013-07-22 09:00,2013-07-24 13:00,,2013-06-14 09:30,2013-06-16 16:00,2013-06-14 09:30,2013-06-16 16:00,2013-06-14 09:30,2013-06-16 16:00,2013-07-22 09:00,2013-07-24 13:00,,PT_Normal,,,,,X9A1Nqm/4Eeq4T1cXzgmag,AdBUkj8+oEi0Eo2JeQDOPQ,,,N,0,0,,,2013-11-05 11:09,2013-11-05 11:09,admin,admin,
305,102022,4512,26113,6590,0,N,N,N,CP_Drtn,TT_Task,DT_FixedDUR2,TK_NotStart,JF721.304,Concrete testing,6916,352,0,32,0,210,210,32,60,0,60,,,,2013-07-24 13:00,2013-07-28 10:00,,2013-06-16 16:00,2013-06-20 08:00,2013-06-16 16:00,2013-06-20 08:00,2013-06-16 16:00,2013-06-20 08:00,2013-07-24 13:00,2013-07-28 10:00,,PT_Normal,,,,,YGdT3LoV/U2strkwj0zAIw,6ft2cTrvvkS3JbzQ3DAeBg,,,N,0,0,,,2013-11-05 11:09,2013-11-05 11:09,admin,admin,
306,102023,4512,26113,6590,0,N,N,N,CP_Drtn,TT_Task,DT_FixedDUR2,TK_NotStart,JF721.305,RT testing for the welding,6942,352,0,40,0,240,240,40,80,0,80,,,,2013-07-28 10:00,2013-08-01 10:00,,2013-06-20 08:00,2013-06-24 13:00,2013-06-20 08:00,2013-06-24 13:00,2013-06-20 08:00,2013-06-24 13:00,2013-07-28 10:00,2013-08-01 10:00,,PT_Normal,,,,,tC5aIbvnIUuTX2KsWuRnbA,Bc+toI8VmUGsp2SonmfYsg,,,N,0,0,,,2013-11-05 11:09,2013-11-05 11:09,admin,admin,
307,102024,4512,26113,6590,0,N,N,N,CP_Drtn,TT_Task,DT_FixedDUR2,TK_NotStart,JF721.306,Sand testing,6915,352,0,40,0,240,240,40,80,0,80,,,,2013-08-01 10:00,2013-08-05 15:00,,2013-06-24 13:00,2013-06-29 08:00,2013-06-24 13:00,2013-06-29 08:00,2013-06-24 13:00,2013-06-29 08:00,2013-08-01 10:00,2013-08-05 15:00,,PT_Normal,,,,,L6DtdQQTKEeTqc3cGvGf0g,cFr8gK331kqMvYV03T5dHA,,,N,0,0,,,2013-11-05 11:09,2013-11-05 11:09,admin,admin,
308,102025,4512,26113,6590,0,N,N,N,CP_Drtn,TT_Task,DT_FixedDUR2,TK_NotStart,JF721.307,Tank Calibration,6965,352,0,40,0,140,140,40,40,0,40,,,,2013-08-05 15:00,2013-08-10 10:00,,2013-06-29 08:00,2013-07-03 08:00,2013-06-29 08:00,2013-07-03 08:00,2013-06-29 08:00,2013-07-03 08:00,2013-08-05 15:00,2013-08-10 10:00,,PT_Normal,,,,,djlkEQ9QEUOb4MyH5Vscrw,x7QmKf7CPEeCne+hTwDCMA,,,N,0,0,,,2013-11-05 11:09,2013-11-05 11:09,admin,admin,
309,102026,4512,26114,6590,0,N,N,N,CP_Drtn,TT_Task,DT_FixedDUR2,TK_NotStart,JF721.221,Rental For Workers & Engineers Accomodation with Facilities,6915,384,0,40,0,320,320,40,120,0,120,,,,2012-08-14 11:00,2012-08-18 16:00,,2012-07-04 07:00,2012-07-08 12:00,2012-07-04 07:00,2012-07-08 12:00,2012-07-04 07:00,2012-07-08 12:00,2012-08-14 11:00,2012-08-18 16:00,,PT_Normal,,,,,EYh8hker8UCGNb1k9sgrJg,HrSgeaSbv0CSiWrOgcgh6Q,,,N,0,0,,,2013-11-05 11:09,2013-11-05 11:09,admin,admin,
310,102027,4512,26114,6590,0,N,N,N,CP_Drtn,TT_Task,DT_FixedDUR2,TK_NotStart,JF721.223,Ma'aden Inspection & Approval for Portacabins,6915,384,0,16,0,80,80,16,30,0,30,,,,2012-09-08 11:00,2012-09-09 17:00,,2012-07-25 12:00,2012-07-27 10:30,2012-07-25 12:00,2012-07-27 10:30,2012-07-25 12:00,2012-07-27 10:30,2012-09-08 11:00,2012-09-09 17:00,,PT_Normal,,,,,+svAbJ/4Q02Ve37ncU1gfA,gfOjc+CVD02J1vIWbNmX4Q,,,N,0,0,,,2013-11-05 11:09,2013-11-05 11:09,admin,admin,
311,102028,4512,26114,6590,0,N,N,N,CP_Drtn,TT_Task,DT_FixedDUR2,TK_NotStart,JF721.222,Complete Mobilize AZ Equipment to Site & Prepare the site fabrication yard,6951,384,0,200,0,2160,2160,200,720,0,720,,,,2012-08-14 11:00,2012-09-08 11:00,,2012-07-04 07:00,2012-07-25 12:00,2012-07-04 07:00,2012-07-25 12:00,2012-07-04 07:00,2012-07-25 12:00,2012-08-14 11:00,2012-09-08 11:00,,PT_Normal,,,,,edOOYdUXRkSTMRksumaI4g,MMvSbrC2QkyGClDJyH1uJQ,,,N,0,0,,,2013-11-05 11:09,2013-11-05 11:09,admin,admin,
312,102029,4512,26197,6590,0,N,N,N,CP_Drtn,TT_Task,DT_FixedDUR2,TK_NotStart,JF721.237,Prepare Shell Course # 1 for Erection,6951,352,0,32,0,100,100,32,30,0,30,,,,2012-12-22 11:00,2012-12-25 13:00,,2012-11-14 09:00,2012-11-17 16:00,2012-11-14 09:00,2012-11-17 16:00,2012-11-14 09:00,2012-11-17 16:00,2012-12-22 11:00,2012-12-25 13:00,,PT_Normal,,,,,reKZu/3DQECgs/It1lDD7g,XgtPMJGhUk+gdCHLmZFEXA,,,N,0,0,,,2013-11-05 11:09,2013-11-05 11:09,admin,admin,
313,102030,4512,26197,6590,0,N,N,N,CP_Drtn,TT_Task,DT_FixedDUR2,TK_NotStart,JF721.238,Erect & Tack Shell Course # 1,6951,352,0,40,0,320,320,40,200,0,200,,,,2012-12-25 13:00,2012-12-30 08:00,,2012-11-17 16:00,2012-11-21 16:00,2012-11-17 16:00,2012-11-21 16:00,2012-11-17 16:00,2012-11-21 16:00,2012-12-25 13:00,2012-12-30 08:00,,PT_Normal,,,,,10xrcYt4dEuID83Lq9gCUQ,lYIICyevK0KWhlRfcxgE9Q,,,N,0,0,,,2013-11-05 11:09,2013-11-05 11:09,admin,admin,
314,102031,4512,26197,6590,0,N,N,N,CP_Drtn,TT_Task,DT_FixedDUR2,TK_NotStart,JF721.239,Weld Outer Vertical Seam,6942,352,0,40,0,280,280,40,140,0,140,,,,2012-12-26 11:00,2012-12-30 16:00,,2012-11-18 14:00,2012-11-22 14:00,2012-11-18 14:00,2012-11-22 14:00,2012-11-18 14:00,2012-11-22 14:00,2012-12-26 11:00,2012-12-30 16:00,,PT_Normal,,,,,D3k0y8yp7UGV3fJd829aLA,QZ+VUGcZFEqSWYekOyWirA,,,N,0,0,,,2013-11-05 11:09,2013-11-05 11:09,admin,admin,
315,102032,4512,26197,6590,0,N,N,N,CP_Drtn,TT_Task,DT_FixedDUR2,TK_NotStart,JF721.240,Backgouge & NDT Inside Vertical Seam,6965,352,0,40,0,220,220,40,80,0,80,,,,2012-12-27 09:00,2012-12-31 14:00,,2012-11-19 12:00,2012-11-23 14:30,2012-11-19 12:00,2012-11-23 14:30,2012-11-19 12:00,2012-11-23 14:30,2012-12-27 09:00,2012-12-31 14:00,,PT_Normal,,,,,CUx/ifzXxUCj3XSUQhsMHQ,Oquglvz0g0+sTQlwVp+Mfg,,,N,0,0,,,2013-11-05 11:09,2013-11-05 11:09,admin,admin,
316,102033,4512,26197,6590,0,N,N,N,CP_Drtn,TT_Task,DT_FixedDUR2,TK_NotStart,JF721.241,Weld Inside Vertical Seam,6968,352,0,40,0,400,400,40,140,0,140,,,,2012-12-28 09:30,2013-01-01 12:00,,2012-11-20 10:00,2012-11-24 15:00,2012-11-20 10:00,2012-11-24 15:00,2012-11-20 10:00,2012-11-24 15:00,2012-12-28 09:30,2013-01-01 12:00,,PT_Normal,,,,,VGpxyNNI10u2LCJXRrad8w,bNgvLtxoF0WK2nioT03ing,,,N,0,0,,,2013-11-05 11:09,2013-11-05 11:09,admin,admin,
317,102034,4512,26157,6590,0,N,N,N,CP_Drtn,TT_Task,DT_FixedDUR2,TK_NotStart,JF721.224,Layout/Stake-out,6942,384,0,24,0,260,260,24,60,0,60,,,,2012-09-10 07:00,2012-09-12 11:00,,2012-07-27 10:30,2012-07-29 17:00,2012-07-27 10:30,2012-07-29 17:00,2012-07-27 10:30,2012-07-29 17:00,2012-09-10 07:00,2012-09-12 11:00,,PT_Normal,,,,,17jxgXsE306BVjy0dD3tjA,zEeV7AYxDU6oxVE21A97rA,,,N,0,0,,,2013-11-05 11:09,2013-11-05 11:09,admin,admin,
318,102035,4512,26157,6590,0,N,N,N,CP_Drtn,TT_Task,DT_FixedDUR2,TK_NotStart,JF721.225,Excavation,6942,384,0,128,0,2250,2250,128,600,0,600,,,,2012-09-12 11:00,2012-09-26 09:00,,2012-07-30 07:00,2012-08-12 15:00,2012-07-30 07:00,2012-08-12 15:00,2012-07-30 07:00,2012-08-12 15:00,2012-09-12 11:00,2012-09-26 09:00,,PT_Normal,,,,,NVn6TWTdD0i3CjAAu1WSyQ,A40lJUmBtky36sGaQyLSlg,,,N,0,0,,,2013-11-05 11:09,2013-11-05 11:09,admin,admin,
319,102036,4512,26157,6590,0,N,N,N,CP_Drtn,TT_Task,DT_FixedDUR2,TK_NotStart,JF721.226,SteelWorks/Formworks,6980,384,0,104,0,1920,1920,104,360,0,360,,,,2012-09-26 09:00,2012-10-07 13:00,,2012-08-12 15:00,2012-08-27 09:00,2012-08-12 15:00,2012-08-27 09:00,2012-08-12 15:00,2012-08-27 09:00,2012-09-26 09:00,2012-10-07 13:00,,PT_Normal,,,,,irwIaE27906NO2PUz5ohyQ,OqdqJmCL+EKcmdEpK9P4sA,,,N,0,0,,,2013-11-05 11:09,2013-11-05 11:09,admin,admin,
320,102037,4512,26157,6590,0,N,N,N,CP_Drtn,TT_Task,DT_FixedDUR2,TK_NotStart,JF721.227,Soil Compaction,6965,384,0,48,0,750,750,48,200,0,200,,,,2012-10-07 13:00,2012-10-12 13:30,,2012-08-27 09:00,2012-09-01 12:00,2012-08-27 09:00,2012-09-01 12:00,2012-08-27 09:00,2012-09-01 12:00,2012-10-07 13:00,2012-10-12 13:30,,PT_Normal,,,,,WKJcZbsEhEyUUwM2wpi6jA,Fw1ZJ+kPUUypXcJsWVdREg,,,N,0,0,,,2013-11-05 11:09,2013-11-05 11:09,admin,admin,
321,102038,4512,26117,6590,0,N,N,N,CP_Drtn,TT_Task,DT_FixedDUR2,TK_NotStart,JF721.228,Concrete Pouring,6951,384,0,16,0,140,140,16,28,0,28,,,,2012-10-12 13:30,2012-10-14 12:00,,2012-09-01 12:00,2012-09-03 08:00,2012-09-01 12:00,2012-09-03 08:00,2012-09-01 12:00,2012-09-03 08:00,2012-10-12 13:30,2012-10-14 12:00,,PT_Normal,,,,,vXbqdBDvlE+CWnhBGst1OA,IS4vCyzVkEaBdYQLzRNHwA,,,N,0,0,,,2013-11-05 11:09,2013-11-05 11:09,admin,admin,
322,102039,4512,26117,6590,0,N,N,N,CP_Drtn,TT_Task,DT_FixedDUR2,TK_NotStart,JF721.229,Concrete Curing,6965,384,0,24,0,240,240,24,60,0,60,,,,2012-10-13 14:00,2012-10-16 08:00,,2012-09-02 10:00,2012-09-04 14:00,2012-09-02 10:00,2012-09-04 14:00,2012-09-02 10:00,2012-09-04 14:00,2012-10-13 14:00,2012-10-16 08:00,,PT_Normal,,,,,7BjBCVv6AkykQ3ZXQXkoLA,1YEsaRCpGkWH2OpUJiN/cQ,,,N,0,0,,,2013-11-05 11:09,2013-11-05 11:09,admin,admin,
323,102040,4512,26117,6590,0,N,N,N,CP_Drtn,TT_Task,DT_FixedDUR2,TK_NotStart,JF721.230,Removal of Formworks,6951,384,0,48,0,650,650,48,150,0,150,,,,2012-10-16 08:00,2012-10-21 11:00,,2012-09-04 14:00,2012-09-09 17:00,2012-09-04 14:00,2012-09-09 17:00,2012-09-04 14:00,2012-09-09 17:00,2012-10-16 08:00,2012-10-21 11:00,,PT_Normal,,,,,YjBwBMhyHUuB5UwnouZgCw,M6QYgC4jbUu+Pmc6mpXdDQ,,,N,0,0,,,2013-11-05 11:09,2013-11-05 11:09,admin,admin,
324,102041,4512,26117,6590,0,N,N,N,CP_Drtn,TT_Task,DT_FixedDUR2,TK_NotStart,JF721.231,Backfilling,6965,384,0,56,0,720,720,56,240,0,240,,,,2012-10-21 11:00,2012-10-28 17:00,,2012-09-10 07:00,2012-09-16 08:00,2012-09-10 07:00,2012-09-16 08:00,2012-09-10 07:00,2012-09-16 08:00,2012-10-21 11:00,2012-10-28 17:00,,PT_Normal,,,,,jHTGGI78YkijwUZNUlfrsg,3eyz/V5xikmiPeysCYtyww,,,N,0,0,,,2013-11-05 11:09,2013-11-05 11:09,admin,admin,
325,102042,4512,26118,6590,0,N,N,N,CP_Drtn,TT_Task,DT_FixedDUR2,TK_NotStart,JF721.232,Erect & Weld Annular Plates,6942,352,0,120,0,770,770,120,350,0,350,,,,2012-10-29 07:00,2012-11-10 17:00,,2012-09-19 10:00,2012-10-02 10:00,2012-09-19 10:00,2012-10-02 10:00,2012-09-19 10:00,2012-10-02 10:00,2012-10-29 07:00,2012-11-10 17:00,,PT_Normal,,,,,TV8M7FEqVkOPoODGcVu8Fg,wAcsRKLcHkq/L3INr7lwpw,,,N,0,0,,,2013-11-05 11:09,2013-11-05 11:09,admin,admin,
326,102043,4512,26118,6590,0,N,N,N,CP_Drtn,TT_Task,DT_FixedDUR2,TK_NotStart,JF721.233,Erect & Tack Bottom Plates,6951,352,0,160,0,960,960,160,300,0,300,,,,2012-11-11 07:00,2012-11-27 17:00,,2012-10-02 10:00,2012-10-19 12:30,2012-10-02 10:00,2012-10-19 12:30,2012-10-02 10:00,2012-10-19 12:30,2012-11-11 07:00,2012-11-27 17:00,,PT_Normal,,,,,VQrejyfuBk6wzulQpi8MgA,110SImtgt0aH/kqL4icYqg,,,N,0,0,,,2013-11-05 11:09,2013-11-05 11:09,admin,admin,
327,102044,4512,26118,6590,0,N,N,N,CP_Drtn,TT_Task,DT_FixedDUR2,TK_NotStart,JF721.234,Welding of Bottom Plates,6968,352,0,200,0,1190,1190,200,420,0,420,,,,2012-11-28 07:00,2012-12-19 12:00,,2012-10-19 12:30,2012-11-11 15:00,2012-10-19 12:30,2012-11-11 15:00,2012-10-19 12:30,2012-11-11 15:00,2012-11-28 07:00,2012-12-19 12:00,,PT_Normal,,,,,oDF37+WqGkKmrt2ygPptUQ,zWD8t9dWWk6r42mM7S9ODg,,,N,0,0,,,2013-11-05 11:09,2013-11-05 11:09,admin,admin,
328,102045,4512,26118,6590,0,N,N,N,CP_Drtn,TT_Task,DT_FixedDUR2,TK_NotStart,JF721.235,Visual Inspection & Cleaning,6935,352,0,16,0,160,160,16,100,0,100,,,,2012-12-19 12:00,2012-12-21 10:30,,2012-11-11 15:00,2012-11-13 11:00,2012-11-11 15:00,2012-11-13 11:00,2012-11-11 15:00,2012-11-13 11:00,2012-12-19 12:00,2012-12-21 10:30,,PT_Normal,,,,,6oUqLx/lxEixickh7nTT8w,stTKlzl250O8vdnn2608yQ,,,N,0,0,,,2013-11-05 11:09,2013-11-05 11:09,admin,admin,
329,102046,4512,26118,6590,0,N,N,N,CP_Drtn,TT_Task,DT_FixedDUR2,TK_NotStart,JF721.236,Carry Out NDT & Vaccuum Box Test,6935,352,0,24,0,320,320,24,200,0,200,,,,2012-12-21 10:30,2012-12-23 17:00,,2012-11-13 11:00,2012-11-15 15:00,2012-11-13 11:00,2012-11-15 15:00,2012-11-13 11:00,2012-11-15 15:00,2012-12-21 10:30,2012-12-23 17:00,,PT_Normal,,,,,26kMElvIfkuN3joEscWHGg,TJThdccDb02ykkVKXx6c/Q,,,N,0,0,,,2013-11-05 11:09,2013-11-05 11:09,admin,admin,
330,102047,4512,26119,6590,0,N,N,N,CP_Drtn,TT_Task,DT_FixedDUR2,TK_NotStart,JF721.308,FInal Inspection & Hand over to client,6915,352,0,32,0,240,240,32,60,0,60,,,,2013-08-10 10:00,2013-08-13 12:00,,2013-07-03 08:00,2013-07-06 15:00,2013-07-03 08:00,2013-07-06 15:00,2013-07-03 08:00,2013-07-06 15:00,2013-08-10 10:00,2013-08-13 12:00,,PT_Normal,,,,,c4VQzNkhfkyAQg6FR/T5HA,I9JlI74c8UyY7wb7nq2A5Q,,,N,0,0,,,2013-11-05 11:09,2013-11-05 11:09,admin,admin,
331,102048,4512,26120,6590,0,N,N,N,CP_Drtn,TT_FinMile,DT_FixedDrtn,TK_NotStart,2.7,Complete MOBILIZATION of camp with Catering and accommodation facilities,,384,0,0,0,0,0,0,0,0,0,,,,2012-09-09 17:00,2012-09-09 17:00,,2012-07-27 10:30,2012-07-27 10:30,2012-07-27 10:30,2012-07-27 10:30,2012-07-27 10:30,2012-07-27 10:30,2012-09-09 17:00,2012-09-09 17:00,,PT_Normal,,,,,c0vS4BTRJ0qniKvYs2TZEg,,,,N,0,0,,,2013-11-05 11:09,2013-11-05 11:09,admin,admin,
332,102049,4512,26121,6590,0,N,N,N,CP_Drtn,TT_FinMile,DT_FixedDrtn,TK_NotStart,2.9,Complete COnstruction of Civil/Structural works,,384,32,0,0,0,0,0,0,0,0,,,,2012-10-28 17:00,2012-10-28 17:00,,2012-09-16 08:00,2012-09-16 08:00,2012-09-16 08:00,2012-09-16 08:00,2012-09-16 08:00,2012-09-16 08:00,2012-10-28 17:00,2012-10-28 17:00,,PT_Normal,,,,,d5TNZ0PEAES/DV3QUVd98A,,,,N,0,0,,,2013-11-05 11:09,2013-11-05 11:09,admin,admin,
333,102050,4512,26122,6590,0,N,N,N,CP_Drtn,TT_FinMile,DT_FixedDrtn,TK_NotStart,2.B,MCC,,352,0,0,0,0,0,0,0,0,0,,,,2013-04-04 11:00,2013-04-04 11:00,,2013-02-25 14:00,2013-02-25 14:00,2013-02-25 14:00,2013-02-25 14:00,2013-02-25 14:00,2013-02-25 14:00,2013-04-04 11:00,2013-04-04 11:00,,PT_Normal,,,,,AXO7zrAvkkuW/7KO/idsLw,,,,N,0,0,,,2013-11-05 11:09,2013-11-05 11:09,admin,admin,
334,102051,4512,26123,6590,0,N,N,N,CP_Drtn,TT_FinMile,DT_FixedDrtn,TK_NotStart,4.B,Final Testing,,360,0,0,0,0,0,0,0,0,0,,,,2013-05-14 09:00,2013-05-14 09:00,,2013-04-05 11:30,2013-04-05 11:30,2013-04-05 11:30,2013-04-05 11:30,2013-04-05 11:30,2013-04-05 11:30,2013-05-14 09:00,2013-05-14 09:00,,PT_Normal,,,,,ofZnzRZ6dUmW7QGQKlraxw,,,,N,0,0,,,2013-11-05 11:09,2013-11-05 11:09,admin,admin,
335,102052,4512,26124,6590,0,N,N,N,CP_Drtn,TT_FinMile,DT_FixedDrtn,TK_NotStart,2.10,Complete Installation,,352,0,0,0,0,0,0,0,0,0,,,,2013-07-24 13:00,2013-07-24 13:00,,2013-06-16 16:00,2013-06-16 16:00,2013-06-16 16:00,2013-06-16 16:00,2013-06-16 16:00,2013-06-16 16:00,2013-07-24 13:00,2013-07-24 13:00,,PT_Normal,,,,,MOmph4Aso0e1gfteNpw7Ww,,,,N,0,0,,,2013-11-05 11:09,2013-11-05 11:09,admin,admin,
336,102053,4512,26125,6590,0,N,N,N,CP_Drtn,TT_FinMile,DT_FixedDrtn,TK_NotStart,3.B,Third Party,,352,0,0,0,0,0,0,0,0,0,,,,2013-08-10 10:00,2013-08-10 10:00,,2013-07-03 08:00,2013-07-03 08:00,2013-07-03 08:00,2013-07-03 08:00,2013-07-03 08:00,2013-07-03 08:00,2013-08-10 10:00,2013-08-10 10:00,,PT_Normal,,,,,bk4ODF2p3Uet5svuORGzIQ,,,,N,0,0,,,2013-11-05 11:09,2013-11-05 11:09,admin,admin,
337,102054,4512,26126,6590,0,N,N,N,CP_Drtn,TT_FinMile,DT_FixedDrtn,TK_NotStart,6.B,Project Completion,,352,80,0,0,0,0,0,0,0,0,,,,2013-08-13 12:00,2013-08-13 12:00,,2013-07-06 15:00,2013-07-06 15:00,2013-07-06 15:00,2013-07-06 15:00,2013-07-06 15:00,2013-07-06 15:00,2013-08-13 12:00,2013-08-13 12:00,,PT_Normal,,,,,Am00P0tfnE283pwQPhWxtQ,,,,N,0,0,,,2013-11-05 11:09,2013-11-05 11:09,admin,admin,
338,102055,4512,26129,6590,0,N,N,N,CP_Drtn,TT_Task,DT_FixedDUR2,TK_NotStart,JF721.2,60% Submittal,6917,432,0,8,0,8,8,8,0,0,0,,,,2012-08-16 15:00,2012-08-18 08:00,,2012-07-01 13:00,2012-07-02 11:00,2012-07-01 13:00,2012-07-02 11:00,2012-07-01 13:00,2012-07-02 11:00,2012-08-16 15:00,2012-08-18 08:00,,PT_Normal,,,,,DFnZ62+LyE2BKr/PPpNcpg,,,,N,0,0,,,2013-11-05 11:09,2013-11-05 11:09,admin,admin,
339,102056,4512,26129,6590,0,N,N,N,CP_Drtn,TT_Task,DT_FixedDUR2,TK_NotStart,JF721.3,60% Comments Incooperation,6917,432,0,56,0,56,56,56,0,0,0,,,,2012-08-18 08:00,2012-08-27 09:00,,2012-07-02 11:00,2012-07-08 12:00,2012-07-02 11:00,2012-07-08 12:00,2012-07-02 11:00,2012-07-08 12:00,2012-08-18 08:00,2012-08-27 09:00,,PT_Normal,,,,,0hqhaxL3dEWHtn8yFUfVog,,,,N,0,0,,,2013-11-05 11:09,2013-11-05 11:09,admin,admin,
340,102057,4512,26129,6590,0,N,N,N,CP_Drtn,TT_Task,DT_FixedDUR2,TK_NotStart,JF721.4,90% Submittal,6917,432,0,8,0,8,8,8,0,0,0,,,,2012-08-27 09:00,2012-08-27 17:00,,2012-07-08 12:00,2012-07-09 10:00,2012-07-08 12:00,2012-07-09 10:00,2012-07-08 12:00,2012-07-09 10:00,2012-08-27 09:00,2012-08-27 17:00,,PT_Normal,,,,,BC9B7pU+mkuucQuIiQPr8Q,,,,N,0,0,,,2013-11-05 11:09,2013-11-05 11:09,admin,admin,
341,102058,4512,26129,6590,0,N,N,N,CP_Drtn,TT_Task,DT_FixedDUR2,TK_NotStart,JF721.5,90% Comments Incooperation,6917,432,0,56,0,56,56,56,0,0,0,,,,2012-08-28 07:00,2012-09-03 08:00,,2012-07-09 10:00,2012-07-15 11:00,2012-07-09 10:00,2012-07-15 11:00,2012-07-09 10:00,2012-07-15 11:00,2012-08-28 07:00,2012-09-03 08:00,,PT_Normal,,,,,1Ik6uaUuwUWMjEbuEEH3Og,,,,N,0,0,,,2013-11-05 11:09,2013-11-05 11:09,admin,admin,
342,102059,4512,26129,6590,0,N,N,N,CP_Drtn,TT_Task,DT_FixedDUR2,TK_NotStart,JF721.6,IFC,6917,432,0,24,0,24,24,24,0,0,0,,,,2012-09-03 08:00,2012-09-05 12:00,,2012-07-15 11:00,2012-07-17 15:00,2012-07-15 11:00,2012-07-17 15:00,2012-07-15 11:00,2012-07-17 15:00,2012-09-03 08:00,2012-09-05 12:00,,PT_Normal,,,,,1Ynzgv/gjkyK1BSiJCWZBw,,,,N,0,0,,,2013-11-05 11:09,2013-11-05 11:09,admin,admin,
343,102060,4512,26171,6590,0,N,N,N,CP_Drtn,TT_Task,DT_FixedDrtn,TK_NotStart,JF721.1,Soil Investigation Works,6911,0,0,16,0,20,20,16,0,0,0,,,,2012-06-30 07:00,2012-07-01 13:00,,2012-06-30 07:00,2012-07-01 13:00,2012-06-30 07:00,2012-07-01 13:00,2012-06-30 07:00,2012-07-01 13:00,2012-06-30 07:00,2012-07-01 13:00,,PT_Normal,,,,,fiVXOZNdbkCavRjPoe0UQQ,,,,Y,0,0,,,2013-11-05 11:09,2013-11-05 11:09,admin,admin,
344,102061,4512,26131,6590,0,N,N,N,CP_Drtn,TT_Task,DT_FixedDUR2,TK_NotStart,JF721.7,60% Submittal (Tank & Foundation Drawings),6917,608,0,8,0,24,24,8,0,0,0,,,,2012-09-24 13:00,2012-09-25 11:00,,2012-07-17 15:00,2012-07-18 13:00,2012-07-17 15:00,2012-07-18 13:00,2012-07-17 15:00,2012-07-18 13:00,2012-09-24 13:00,2012-09-25 11:00,,PT_Normal,,,,,FYANt/GfN0euNbZrdFJ1cA,,,,N,0,0,,,2013-11-05 11:09,2013-11-05 11:09,admin,admin,
345,102062,4512,26131,6590,0,N,N,N,CP_Drtn,TT_Task,DT_FixedDUR2,TK_NotStart,JF721.8,60% Comments Incooperation (Tanks & Foundation Drawings),6912,608,0,40,0,120,120,40,0,0,0,,,,2012-09-25 11:00,2012-09-29 16:00,,2012-07-18 13:00,2012-07-23 08:00,2012-07-18 13:00,2012-07-23 08:00,2012-07-18 13:00,2012-07-23 08:00,2012-09-25 11:00,2012-09-29 16:00,,PT_Normal,,,,,LbTkJDmC3EyF6HOwvcMxRQ,,,,N,0,0,,,2013-11-05 11:09,2013-11-05 11:09,admin,admin,
346,102063,4512,26131,6590,0,N,N,N,CP_Drtn,TT_Task,DT_FixedDUR2,TK_NotStart,JF721.9,90% Submittal (Tanks & Foundation Drawings),6912,608,0,8,0,24,24,8,0,0,0,,,,2012-09-29 16:00,2012-09-30 14:00,,2012-07-23 08:00,2012-07-23 16:00,2012-07-23 08:00,2012-07-23 16:00,2012-07-23 08:00,2012-07-23 16:00,2012-09-29 16:00,2012-09-30 14:00,,PT_Normal,,,,,kI3NEwzDMUmYw7SLzw8s8w,,,,N,0,0,,,2013-11-05 11:09,2013-11-05 11:09,admin,admin,
347,102064,4512,26131,6590,0,N,N,N,CP_Drtn,TT_Task,DT_FixedDUR2,TK_NotStart,JF721.10,90% Comments Incooperation (Tanks & Foundation Drawings),6917,608,0,16,0,48,48,16,0,0,0,,,,2012-09-30 14:00,2012-10-02 10:00,,2012-07-23 16:00,2012-07-25 12:00,2012-07-23 16:00,2012-07-25 12:00,2012-07-23 16:00,2012-07-25 12:00,2012-09-30 14:00,2012-10-02 10:00,,PT_Normal,,,,,LC+R/C67y0CWVpfaOHhJxw,,,,N,0,0,,,2013-11-05 11:09,2013-11-05 11:09,admin,admin,
348,102065,4512,26131,6590,0,N,N,N,CP_Drtn,TT_Task,DT_FixedDUR2,TK_NotStart,JF721.11,IFC,6913,616,0,8,0,24,24,8,0,0,0,,,,2012-10-03 08:00,2012-10-03 16:00,,2012-07-25 12:00,2012-07-26 10:00,2012-07-25 12:00,2012-07-26 10:00,2012-07-25 12:00,2012-07-26 10:00,2012-10-03 08:00,2012-10-03 16:00,,PT_Normal,,,,,1OijmVLDEkimWMIvNl5aMg,,,,N,0,0,,,2013-11-05 11:09,2013-11-05 11:09,admin,admin,
349,102066,4512,26132,6590,0,N,N,N,CP_Drtn,TT_FinMile,DT_FixedDrtn,TK_NotStart,1.2,Complete survey and Geotechnical Investigation for both Master Pump Station,,432,0,0,0,0,0,0,0,0,0,,,,2012-08-16 15:00,2012-08-16 15:00,,2012-07-01 13:00,2012-07-01 13:00,2012-07-01 13:00,2012-07-01 13:00,2012-07-01 13:00,2012-07-01 13:00,2012-08-16 15:00,2012-08-16 15:00,,PT_Normal,,,,,My3TwRJG3UGiAEsb9bRkZQ,,,,N,0,0,,,2013-11-05 11:09,2013-11-05 11:09,admin,admin,
350,102067,4512,26133,6590,0,N,N,N,CP_Drtn,TT_FinMile,DT_FixedDrtn,TK_NotStart,1.3,Complete Engineering design and Calculations,,608,0,0,0,0,0,0,0,0,0,,,,2012-09-24 13:00,2012-09-24 13:00,,2012-07-17 15:00,2012-07-17 15:00,2012-07-17 15:00,2012-07-17 15:00,2012-07-17 15:00,2012-07-17 15:00,2012-09-24 13:00,2012-09-24 13:00,,PT_Normal,,,,,heOcy9RLEEWgoHCxp5ngoA,,,,N,0,0,,,2013-11-05 11:09,2013-11-05 11:09,admin,admin,
351,102068,4512,26134,6590,0,N,N,N,CP_Drtn,TT_FinMile,DT_FixedDrtn,TK_NotStart,1.4,Complete Fabrication and GA Drawing with Bill of Quantities,,616,8,0,0,0,0,0,0,0,0,,,,2012-10-03 16:00,2012-10-03 16:00,,2012-07-26 10:00,2012-07-26 10:00,2012-07-26 10:00,2012-07-26 10:00,2012-07-26 10:00,2012-07-26 10:00,2012-10-03 16:00,2012-10-03 16:00,,PT_Normal,,,,,Z1TUGDo+nEOcaxJOX4b+Zg,,,,N,0,0,,,2013-11-05 11:09,2013-11-05 11:09,admin,admin,
352,102069,4512,26136,6590,0,N,N,N,CP_Drtn,TT_Task,DT_FixedDUR2,TK_NotStart,JF721.28,Approval for Vendor Drawings & Specifications,,608,0,48,0,0,0,48,0,0,0,,,,2012-10-03 16:00,2012-10-09 09:00,,2012-07-27 10:30,2012-08-01 11:00,2012-07-27 10:30,2012-08-01 11:00,2012-07-27 10:30,2012-08-01 11:00,2012-10-03 16:00,2012-10-09 09:00,,PT_Normal,,,,,IJNlzmFE1U2CyfpuxsGOYQ,,,,N,0,0,,,2013-11-05 11:09,2013-11-05 11:09,admin,admin,
353,102070,4512,26136,6590,0,N,N,N,CP_Drtn,TT_Task,DT_FixedDUR2,TK_NotStart,JF721.29,PO  Issued,,1232,0,136,0,0,0,136,0,0,0,,,,2012-12-17 08:00,2012-12-31 14:00,,2012-08-01 11:00,2012-08-15 17:00,2012-08-01 11:00,2012-08-15 17:00,2012-08-01 11:00,2012-08-15 17:00,2012-12-17 08:00,2012-12-31 14:00,,PT_Normal,,,,,DXO0NYe/gEundPfBasqxUQ,,,,N,0,0,,,2013-11-05 11:09,2013-11-05 11:09,admin,admin,
354,102071,4512,26137,6590,0,N,N,N,CP_Drtn,TT_Task,DT_FixedDUR2,TK_NotStart,JF721.34,Plates,,432,0,736,0,0,0,736,0,0,0,,,,2012-09-10 15:00,2012-11-30 13:30,,2012-07-23 08:00,2012-10-13 14:00,2012-07-23 08:00,2012-10-13 14:00,2012-07-23 08:00,2012-10-13 14:00,2012-09-10 15:00,2012-11-30 13:30,,PT_Normal,,,,,UN1c9MGW9kqjyA4NKGZNbA,,,,N,0,0,,,2013-11-05 11:09,2013-11-05 11:09,admin,admin,
355,102072,4512,26137,6590,0,N,N,N,CP_Drtn,TT_Task,DT_FixedDUR2,TK_NotStart,JF721.35,Profile Material,,1232,0,296,0,0,0,296,0,0,0,,,,2012-12-31 14:00,2013-01-31 12:00,,2012-08-16 07:00,2012-09-20 08:00,2012-08-16 07:00,2012-09-20 08:00,2012-08-16 07:00,2012-09-20 08:00,2012-12-31 14:00,2013-01-31 12:00,,PT_Normal,,,,,syqrl5K+bUSbCWRoKWWi1g,,,,N,0,0,,,2013-11-05 11:09,2013-11-05 11:09,admin,admin,
356,102073,4512,26137,6590,0,N,N,N,CP_Drtn,TT_Task,DT_FixedDUR2,TK_NotStart,JF721.36,Pipes & Fittings,,608,0,136,0,0,0,136,0,0,0,,,,2012-10-14 12:00,2012-10-30 13:00,,2012-08-06 14:00,2012-08-24 12:30,2012-08-06 14:00,2012-08-24 12:30,2012-08-06 14:00,2012-08-24 12:30,2012-10-14 12:00,2012-10-30 13:00,,PT_Normal,,,,,3nFZ6gJnhU2/SSrks7Ie4A,,,,N,0,0,,,2013-11-05 11:09,2013-11-05 11:09,admin,admin,
357,102074,4512,26138,6590,0,N,N,N,CP_Drtn,TT_Task,DT_FixedDUR2,TK_NotStart,JF721.37,Define Layout,,432,0,24,0,0,0,24,0,0,0,,,,2012-10-19 12:30,2012-10-22 09:00,,2012-09-03 08:00,2012-09-05 12:00,2012-09-03 08:00,2012-09-05 12:00,2012-09-03 08:00,2012-09-05 12:00,2012-10-19 12:30,2012-10-22 09:00,,PT_Normal,,,,,uCgTTglcPUqjGJ4PEzXf9Q,,,,N,0,0,,,2013-11-05 11:09,2013-11-05 11:09,admin,admin,
358,102075,4512,26138,6590,0,N,N,N,CP_Drtn,TT_Task,DT_FixedDUR2,TK_NotStart,JF721.38,Cutting,,432,0,24,0,0,0,24,0,0,0,,,,2012-10-19 12:30,2012-10-22 09:00,,2012-09-03 08:00,2012-09-05 12:00,2012-09-03 08:00,2012-09-05 12:00,2012-09-03 08:00,2012-09-05 12:00,2012-10-19 12:30,2012-10-22 09:00,,PT_Normal,,,,,B7Is/ZLQc02fEm3Emz999Q,,,,N,0,0,,,2013-11-05 11:09,2013-11-05 11:09,admin,admin,
359,102076,4512,26138,6590,0,N,N,N,CP_Drtn,TT_Task,DT_FixedDUR2,TK_NotStart,JF721.39,Fit-up,,432,0,32,0,0,0,32,0,0,0,,,,2012-10-22 09:00,2012-10-25 11:00,,2012-09-05 12:00,2012-09-09 09:00,2012-09-05 12:00,2012-09-09 09:00,2012-09-05 12:00,2012-09-09 09:00,2012-10-22 09:00,2012-10-25 11:00,,PT_Normal,,,,,mqZe1r6gkkSzcfsxcz7Mpg,,,,N,0,0,,,2013-11-05 11:09,2013-11-05 11:09,admin,admin,
360,102077,4512,26138,6590,0,N,N,N,CP_Drtn,TT_Task,DT_FixedDUR2,TK_NotStart,JF721.40,Welding,,432,0,32,0,0,0,32,0,0,0,,,,2012-10-23 07:00,2012-10-28 09:00,,2012-09-06 10:00,2012-09-09 17:00,2012-09-06 10:00,2012-09-09 17:00,2012-09-06 10:00,2012-09-09 17:00,2012-10-23 07:00,2012-10-28 09:00,,PT_Normal,,,,,jpR98Teg702NwidVe3Ea4w,,,,N,0,0,,,2013-11-05 11:09,2013-11-05 11:09,admin,admin,
361,102078,4512,26138,6590,0,N,N,N,CP_Drtn,TT_Task,DT_FixedDUR2,TK_NotStart,JF721.41,Shop Blasting/Painting,,432,0,32,0,0,0,32,0,0,0,,,,2012-10-23 15:00,2012-10-28 17:00,,2012-09-07 10:30,2012-09-10 15:00,2012-09-07 10:30,2012-09-10 15:00,2012-09-07 10:30,2012-09-10 15:00,2012-10-23 15:00,2012-10-28 17:00,,PT_Normal,,,,,dIwtJ56XpE6kabeeMqB0rA,,,,N,0,0,,,2013-11-05 11:09,2013-11-05 11:09,admin,admin,
362,102079,4512,26138,6590,0,N,N,N,CP_Drtn,TT_Task,DT_FixedDUR2,TK_NotStart,JF721.42,Inspect & Accept for use,,432,0,24,0,0,0,24,0,0,0,,,,2012-10-29 07:00,2012-10-31 11:00,,2012-09-10 15:00,2012-09-13 09:00,2012-09-10 15:00,2012-09-13 09:00,2012-09-10 15:00,2012-09-13 09:00,2012-10-29 07:00,2012-10-31 11:00,,PT_Normal,,,,,+t9WbO/+S0et7FuMQHcX/w,,,,N,0,0,,,2013-11-05 11:09,2013-11-05 11:09,admin,admin,
363,102080,4512,26139,6590,0,N,N,N,CP_Drtn,TT_Task,DT_FixedDUR2,TK_NotStart,JF721.18,PO Issued,,728,0,24,0,0,0,24,0,0,0,,,,2012-09-29 16:00,2012-10-02 10:00,,2012-07-10 08:00,2012-07-12 12:00,2012-07-10 08:00,2012-07-12 12:00,2012-07-10 08:00,2012-07-12 12:00,2012-09-29 16:00,2012-10-02 10:00,,PT_Normal,,,,,ffd16zzdR0mQcoOcft8dZA,,,,N,0,0,,,2013-11-05 11:09,2013-11-05 11:09,admin,admin,
364,102081,4512,26139,6590,0,N,N,N,CP_Drtn,TT_Task,DT_FixedDUR2,TK_NotStart,JF721.19,Ma'aden Site Delievery,,728,168,64,0,0,0,64,0,0,0,,,,2012-10-02 10:00,2012-10-09 09:00,,2012-07-12 12:00,2012-07-19 11:00,2012-07-12 12:00,2012-07-19 11:00,2012-07-12 12:00,2012-07-19 11:00,2012-10-02 10:00,2012-10-09 09:00,,PT_Normal,,,,,JI4zorBCD0eq84uE+vzfTQ,,,,N,0,0,,,2013-11-05 11:09,2013-11-05 11:09,admin,admin,
365,102082,4512,26140,6590,0,N,N,N,CP_Drtn,TT_Task,DT_FixedDUR2,TK_NotStart,JF721.20,Approval For Vendor Drawings & Specifications,,608,0,24,0,0,0,24,0,0,0,,,,2012-10-01 12:00,2012-10-03 16:00,,2012-07-24 14:00,2012-07-27 10:30,2012-07-24 14:00,2012-07-27 10:30,2012-07-24 14:00,2012-07-27 10:30,2012-10-01 12:00,2012-10-03 16:00,,PT_Normal,,,,,t03DpeXNvU6QqcTh2dX2Fw,,,,N,0,0,,,2013-11-05 11:09,2013-11-05 11:09,admin,admin,
366,102083,4512,26140,6590,0,N,N,N,CP_Drtn,TT_Task,DT_FixedDUR2,TK_NotStart,JF721.21,P.O Issued,,1384,0,216,0,0,0,216,0,0,0,,,,2012-12-28 09:30,2013-01-20 13:00,,2012-07-27 10:30,2012-08-22 14:00,2012-07-27 10:30,2012-08-22 14:00,2012-07-27 10:30,2012-08-22 14:00,2012-12-28 09:30,2013-01-20 13:00,,PT_Normal,,,,,kFnrkapys0myahdR4sbufA,,,,N,0,0,,,2013-11-05 11:09,2013-11-05 11:09,admin,admin,
367,102084,4512,26182,6590,0,N,N,N,CP_Drtn,TT_Task,DT_FixedDUR2,TK_NotStart,JF721.12,PO Issued,,560,0,24,0,0,0,24,0,0,0,,,,2012-09-03 08:00,2012-09-05 12:00,,2012-07-01 13:00,2012-07-03 17:00,2012-07-01 13:00,2012-07-03 17:00,2012-07-01 13:00,2012-07-03 17:00,2012-09-03 08:00,2012-09-05 12:00,,PT_Normal,,,,,WDpmeSKjY0Ox6eqPI/EZlw,,,,N,0,0,,,2013-11-05 11:09,2013-11-05 11:09,admin,admin,
368,102085,4512,26182,6590,0,N,N,N,CP_Drtn,TT_Task,DT_FixedDUR2,TK_NotStart,JF721.13,Ma'aden Site Delievery,,560,0,56,0,0,0,56,0,0,0,,,,2012-09-05 12:00,2012-09-11 13:00,,2012-07-04 07:00,2012-07-10 08:00,2012-07-04 07:00,2012-07-10 08:00,2012-07-04 07:00,2012-07-10 08:00,2012-09-05 12:00,2012-09-11 13:00,,PT_Normal,,,,,fAeFyQwkoE6xlFmF2C4R/g,,,,N,0,0,,,2013-11-05 11:09,2013-11-05 11:09,admin,admin,
369,102086,4512,26224,6590,0,N,N,N,CP_Drtn,TT_Task,DT_FixedDUR2,TK_NotStart,JF721.14,Approval for Vendor Drawings & SPecifications,,608,0,24,0,0,0,24,0,0,0,,,,2012-10-01 12:00,2012-10-03 16:00,,2012-07-24 14:00,2012-07-27 10:30,2012-07-24 14:00,2012-07-27 10:30,2012-07-24 14:00,2012-07-27 10:30,2012-10-01 12:00,2012-10-03 16:00,,PT_Normal,,,,,R09ct9ZQsku/8ZuHCyMYWw,,,,N,0,0,,,2013-11-05 11:09,2013-11-05 11:09,admin,admin,
370,102087,4512,26224,6590,0,N,N,N,CP_Drtn,TT_Task,DT_FixedDUR2,TK_NotStart,JF721.15,PO Issued,,1384,0,216,0,0,0,216,0,0,0,,,,2012-12-28 09:30,2013-01-20 13:00,,2012-07-27 10:30,2012-08-22 14:00,2012-07-27 10:30,2012-08-22 14:00,2012-07-27 10:30,2012-08-22 14:00,2012-12-28 09:30,2013-01-20 13:00,,PT_Normal,,,,,mTvBliz4KkW6SRjH3v5B7w,,,,N,0,0,,,2013-11-05 11:09,2013-11-05 11:09,admin,admin,
371,102088,4512,26224,6590,0,N,N,N,CP_Drtn,TT_Task,DT_FixedDUR2,TK_NotStart,JF721.16,CP System Delievered to Ma'aden Site & Installed,6942,432,0,120,0,1000,1000,120,400,0,400,,,,2013-06-07 10:30,2013-06-20 08:00,,2013-04-21 16:00,2013-05-04 16:00,2013-04-21 16:00,2013-05-04 16:00,2013-04-21 16:00,2013-05-04 16:00,2013-06-07 10:30,2013-06-20 08:00,,PT_Normal,,,,,xGXcn0kOaky4O9ijdxPQaA,,,,N,0,0,,,2013-11-05 11:09,2013-11-05 11:09,admin,admin,
372,102089,4512,26224,6590,0,N,N,N,CP_Drtn,TT_Task,DT_FixedDUR2,TK_NotStart,JF721.17,Ma'aden CP Inspection,6942,432,0,24,0,100,100,24,40,0,40,,,,2013-06-20 08:00,2013-06-22 17:00,,2013-05-04 16:00,2013-05-07 10:00,2013-05-04 16:00,2013-05-07 10:00,2013-05-04 16:00,2013-05-07 10:00,2013-06-20 08:00,2013-06-22 17:00,,PT_Normal,,,,,sLUSJ0gvdEK/S6uTJVYirw,,,,N,0,0,,,2013-11-05 11:09,2013-11-05 11:09,admin,admin,
373,102090,4512,26184,6590,0,N,N,N,CP_Drtn,TT_Task,DT_FixedDUR2,TK_NotStart,JF721.26,Approve Vendor Drawings & Specifcations,,432,0,24,0,0,0,24,0,0,0,,,,2012-09-05 12:00,2012-09-08 11:00,,2012-07-17 15:00,2012-07-20 11:30,2012-07-17 15:00,2012-07-20 11:30,2012-07-17 15:00,2012-07-20 11:30,2012-09-05 12:00,2012-09-08 11:00,,PT_Normal,,,,,hSKQeb5Y80m8d5vQoRf+RA,,,,N,0,0,,,2013-11-05 11:09,2013-11-05 11:09,admin,admin,
374,102091,4512,26184,6590,0,N,N,N,CP_Drtn,TT_Task,DT_FixedDUR2,TK_NotStart,JF721.27,P.O Issued,,432,0,24,0,0,0,24,0,0,0,,,,2012-09-08 11:00,2012-09-10 15:00,,2012-07-20 11:30,2012-07-23 08:00,2012-07-20 11:30,2012-07-23 08:00,2012-07-20 11:30,2012-07-23 08:00,2012-09-08 11:00,2012-09-10 15:00,,PT_Normal,,,,,9TRO5+LU+ka2BTk2xCb79Q,,,,N,0,0,,,2013-11-05 11:09,2013-11-05 11:09,admin,admin,
375,102092,4512,26144,6590,0,N,N,N,CP_Drtn,TT_Task,DT_FixedDUR2,TK_NotStart,JF721.43,Define Layout,,864,0,32,0,0,0,32,0,0,0,,,,2012-12-09 11:00,2012-12-12 13:00,,2012-09-05 12:00,2012-09-09 09:00,2012-09-05 12:00,2012-09-09 09:00,2012-09-05 12:00,2012-09-09 09:00,2012-12-09 11:00,2012-12-12 13:00,,PT_Normal,,,,,uHOcQw7Vhk2PaKV6vDZSiA,,,,N,0,0,,,2013-11-05 11:09,2013-11-05 11:09,admin,admin,
376,102093,4512,26144,6590,0,N,N,N,CP_Drtn,TT_Task,DT_FixedDUR2,TK_NotStart,JF721.44,Cutting,,864,0,40,0,0,0,40,0,0,0,,,,2012-12-09 11:00,2012-12-13 11:00,,2012-09-05 12:00,2012-09-09 17:00,2012-09-05 12:00,2012-09-09 17:00,2012-09-05 12:00,2012-09-09 17:00,2012-12-09 11:00,2012-12-13 11:00,,PT_Normal,,,,,QaGdkUltxE2k4bpwYnNUiQ,,,,N,0,0,,,2013-11-05 11:09,2013-11-05 11:09,admin,admin,
377,102094,4512,26144,6590,0,N,N,N,CP_Drtn,TT_Task,DT_FixedDUR2,TK_NotStart,JF721.45,Bevelling/Rolling,,864,0,48,0,0,0,48,0,0,0,,,,2012-12-11 07:00,2012-12-16 10:00,,2012-09-07 10:30,2012-09-12 11:00,2012-09-07 10:30,2012-09-12 11:00,2012-09-07 10:30,2012-09-12 11:00,2012-12-11 07:00,2012-12-16 10:00,,PT_Normal,,,,,YVjj9zd5rESiv1U/EzGjug,,,,N,0,0,,,2013-11-05 11:09,2013-11-05 11:09,admin,admin,
378,102095,4512,26144,6590,0,N,N,N,CP_Drtn,TT_Task,DT_FixedDUR2,TK_NotStart,JF721.46,Shop Blasting/Painting,,864,0,48,0,0,0,48,0,0,0,,,,2012-12-13 11:00,2012-12-18 14:00,,2012-09-10 07:00,2012-09-15 10:00,2012-09-10 07:00,2012-09-15 10:00,2012-09-10 07:00,2012-09-15 10:00,2012-12-13 11:00,2012-12-18 14:00,,PT_Normal,,,,,tadtpSsrDkGsDa5mO+OMuw,,,,N,0,0,,,2013-11-05 11:09,2013-11-05 11:09,admin,admin,
379,102096,4512,26144,6590,0,N,N,N,CP_Drtn,TT_Task,DT_FixedDUR2,TK_NotStart,JF721.47,Inspect & Accept for use,,864,0,32,0,0,0,32,0,0,0,,,,2012-12-18 14:00,2012-12-22 11:00,,2012-09-15 10:00,2012-09-18 12:00,2012-09-15 10:00,2012-09-18 12:00,2012-09-15 10:00,2012-09-18 12:00,2012-12-18 14:00,2012-12-22 11:00,,PT_Normal,,,,,6aAynb1KzEK+c3MhQFSFVg,,,,N,0,0,,,2013-11-05 11:09,2013-11-05 11:09,admin,admin,
380,102097,4512,26145,6590,0,N,N,N,CP_Drtn,TT_Task,DT_FixedDUR2,TK_NotStart,JF721.30,Approval for Vendor Drawings & Specifications,,608,0,48,0,0,0,48,0,0,0,,,,2012-10-03 16:00,2012-10-09 09:00,,2012-07-27 10:30,2012-08-01 11:00,2012-07-27 10:30,2012-08-01 11:00,2012-07-27 10:30,2012-08-01 11:00,2012-10-03 16:00,2012-10-09 09:00,,PT_Normal,,,,,N/En/2M5UUWKTMx/DT+bpg,,,,N,0,0,,,2013-11-05 11:09,2013-11-05 11:09,admin,admin,
381,102098,4512,26145,6590,0,N,N,N,CP_Drtn,TT_Task,DT_FixedDUR2,TK_NotStart,JF721.31,PO issued,,608,0,48,0,0,0,48,0,0,0,,,,2012-10-09 09:00,2012-10-14 12:00,,2012-08-01 11:00,2012-08-06 14:00,2012-08-01 11:00,2012-08-06 14:00,2012-08-01 11:00,2012-08-06 14:00,2012-10-09 09:00,2012-10-14 12:00,,PT_Normal,,,,,6ciCotd9m0a7Ua+U4M/Diw,,,,N,0,0,,,2013-11-05 11:09,2013-11-05 11:09,admin,admin,
382,102099,4512,26146,6590,0,N,N,N,CP_Drtn,TT_Task,DT_FixedDUR2,TK_NotStart,JF721.48,Define layout,,1232,0,24,0,0,0,24,0,0,0,,,,2013-01-31 12:00,2013-02-03 11:00,,2012-09-20 08:00,2012-09-22 17:00,2012-09-20 08:00,2012-09-22 17:00,2012-09-20 08:00,2012-09-22 17:00,2013-01-31 12:00,2013-02-03 11:00,,PT_Normal,,,,,RPd08yJpI0ya4vqQ1yibDg,,,,N,0,0,,,2013-11-05 11:09,2013-11-05 11:09,admin,admin,
383,102100,4512,26146,6590,0,N,N,N,CP_Drtn,TT_Task,DT_FixedDUR2,TK_NotStart,JF721.49,Cutting,,1232,0,32,0,0,0,32,0,0,0,,,,2013-02-03 11:00,2013-02-06 13:00,,2012-09-23 07:00,2012-09-26 09:00,2012-09-23 07:00,2012-09-26 09:00,2012-09-23 07:00,2012-09-26 09:00,2013-02-03 11:00,2013-02-06 13:00,,PT_Normal,,,,,vizSc95NqkiD7/rBKDN4Mw,,,,N,0,0,,,2013-11-05 11:09,2013-11-05 11:09,admin,admin,
384,102101,4512,26146,6590,0,N,N,N,CP_Drtn,TT_Task,DT_FixedDUR2,TK_NotStart,JF721.50,Bevelling,,1232,0,40,0,0,0,40,0,0,0,,,,2013-02-04 09:00,2013-02-08 11:30,,2012-09-23 15:00,2012-09-27 15:00,2012-09-23 15:00,2012-09-27 15:00,2012-09-23 15:00,2012-09-27 15:00,2013-02-04 09:00,2013-02-08 11:30,,PT_Normal,,,,,Go1Xm7JGOUWxT46Av7iB7w,,,,N,0,0,,,2013-11-05 11:09,2013-11-05 11:09,admin,admin,
385,102102,4512,26146,6590,0,N,N,N,CP_Drtn,TT_Task,DT_FixedDUR2,TK_NotStart,JF721.51,Fit-up/Welding,,1232,0,48,0,0,0,48,0,0,0,,,,2013-02-05 15:00,2013-02-11 08:00,,2012-09-25 11:00,2012-09-30 14:00,2012-09-25 11:00,2012-09-30 14:00,2012-09-25 11:00,2012-09-30 14:00,2013-02-05 15:00,2013-02-11 08:00,,PT_Normal,,,,,toGg6W4OxkCmN3IzK19C7A,,,,N,0,0,,,2013-11-05 11:09,2013-11-05 11:09,admin,admin,
386,102103,4512,26146,6590,0,N,N,N,CP_Drtn,TT_Task,DT_FixedDUR2,TK_NotStart,JF721.52,Shop Blasting/Painting,,1232,0,48,0,0,0,48,0,0,0,,,,2013-02-08 11:30,2013-02-13 12:00,,2012-09-27 15:00,2012-10-03 08:00,2012-09-27 15:00,2012-10-03 08:00,2012-09-27 15:00,2012-10-03 08:00,2013-02-08 11:30,2013-02-13 12:00,,PT_Normal,,,,,G8FbO0UsMU62o+yWCZx2oA,,,,N,0,0,,,2013-11-05 11:09,2013-11-05 11:09,admin,admin,
387,102104,4512,26146,6590,0,N,N,N,CP_Drtn,TT_Task,DT_FixedDUR2,TK_NotStart,JF721.53,Inspect & Accept for use,,1232,0,24,0,0,0,24,0,0,0,,,,2013-02-13 12:00,2013-02-16 11:00,,2012-10-03 08:00,2012-10-05 14:30,2012-10-03 08:00,2012-10-05 14:30,2012-10-03 08:00,2012-10-05 14:30,2013-02-13 12:00,2013-02-16 11:00,,PT_Normal,,,,,KNAmHcVcT0+ydB+xGgqYUg,,,,N,0,0,,,2013-11-05 11:09,2013-11-05 11:09,admin,admin,
388,102105,4512,26147,6590,0,N,N,N,CP_Drtn,TT_Task,DT_FixedDUR2,TK_NotStart,JF721.54,Define Layout,,1288,0,40,0,0,0,40,0,0,0,,,,2013-02-17 09:00,2013-02-21 09:00,,2012-09-30 14:00,2012-10-04 14:00,2012-09-30 14:00,2012-10-04 14:00,2012-09-30 14:00,2012-10-04 14:00,2013-02-17 09:00,2013-02-21 09:00,,PT_Normal,,,,,Cd++Se4K1E2D9ShjnivAuA,,,,N,0,0,,,2013-11-05 11:09,2013-11-05 11:09,admin,admin,
389,102106,4512,26147,6590,0,N,N,N,CP_Drtn,TT_Task,DT_FixedDUR2,TK_NotStart,JF721.55,Cutting,,1288,0,56,0,0,0,56,0,0,0,,,,2013-02-21 09:00,2013-02-27 10:00,,2012-10-04 14:00,2012-10-10 15:00,2012-10-04 14:00,2012-10-10 15:00,2012-10-04 14:00,2012-10-10 15:00,2013-02-21 09:00,2013-02-27 10:00,,PT_Normal,,,,,VP8vsoqVakeo7iHRyqMcQg,,,,N,0,0,,,2013-11-05 11:09,2013-11-05 11:09,admin,admin,
390,102107,4512,26147,6590,0,N,N,N,CP_Drtn,TT_Task,DT_FixedDUR2,TK_NotStart,JF721.56,Fit-Up,,1288,0,80,0,0,0,80,0,0,0,,,,2013-02-27 10:00,2013-03-07 15:00,,2012-10-10 15:00,2012-10-19 12:30,2012-10-10 15:00,2012-10-19 12:30,2012-10-10 15:00,2012-10-19 12:30,2013-02-27 10:00,2013-03-07 15:00,,PT_Normal,,,,,+iMGodFwvUGsJgoM4sgcsQ,,,,N,0,0,,,2013-11-05 11:09,2013-11-05 11:09,admin,admin,
391,102108,4512,26147,6590,0,N,N,N,CP_Drtn,TT_Task,DT_FixedDUR2,TK_NotStart,JF721.57,Welding,,1288,0,56,0,0,0,56,0,0,0,,,,2013-03-07 15:00,2013-03-13 16:00,,2012-10-19 12:30,2012-10-25 11:00,2012-10-19 12:30,2012-10-25 11:00,2012-10-19 12:30,2012-10-25 11:00,2013-03-07 15:00,2013-03-13 16:00,,PT_Normal,,,,,I1GbWF28MkycN9iSX6WPqQ,,,,N,0,0,,,2013-11-05 11:09,2013-11-05 11:09,admin,admin,
392,102109,4512,26147,6590,0,N,N,N,CP_Drtn,TT_Task,DT_FixedDUR2,TK_NotStart,JF721.58,Blasting/Painting,,1288,0,56,0,0,0,56,0,0,0,,,,2013-03-13 16:00,2013-03-19 17:00,,2012-10-25 11:00,2012-11-01 17:00,2012-10-25 11:00,2012-11-01 17:00,2012-10-25 11:00,2012-11-01 17:00,2013-03-13 16:00,2013-03-19 17:00,,PT_Normal,,,,,IiU2D1KFREijUyg6fSStFQ,,,,N,0,0,,,2013-11-05 11:09,2013-11-05 11:09,admin,admin,
393,102110,4512,26147,6590,0,N,N,N,CP_Drtn,TT_Task,DT_FixedDUR2,TK_NotStart,JF721.59,Inspect & Accept for use,,1288,0,32,0,0,0,32,0,0,0,,,,2013-03-20 07:00,2013-03-23 14:00,,2012-11-02 09:30,2012-11-05 14:00,2012-11-02 09:30,2012-11-05 14:00,2012-11-02 09:30,2012-11-05 14:00,2013-03-20 07:00,2013-03-23 14:00,,PT_Normal,,,,,OSNgzpVLVU+mQrr0npY82w,,,,N,0,0,,,2013-11-05 11:09,2013-11-05 11:09,admin,admin,
394,102111,4512,26148,6590,0,N,N,N,CP_Drtn,TT_Task,DT_FixedDUR2,TK_NotStart,JF721.22,Approval for vendor Drawings & Specifcations,,608,0,24,0,0,0,24,0,0,0,,,,2012-10-01 12:00,2012-10-03 16:00,,2012-07-24 14:00,2012-07-27 10:30,2012-07-24 14:00,2012-07-27 10:30,2012-07-24 14:00,2012-07-27 10:30,2012-10-01 12:00,2012-10-03 16:00,,PT_Normal,,,,,k4NC4RMfFEChgRa/ss81Mg,,,,N,0,0,,,2013-11-05 11:09,2013-11-05 11:09,admin,admin,
395,102112,4512,26148,6590,0,N,N,N,CP_Drtn,TT_Task,DT_FixedDUR2,TK_NotStart,JF721.23,P.O Issued,,1384,0,216,0,0,0,216,0,0,0,,,,2012-12-28 09:30,2013-01-20 13:00,,2012-07-27 10:30,2012-08-22 14:00,2012-07-27 10:30,2012-08-22 14:00,2012-07-27 10:30,2012-08-22 14:00,2012-12-28 09:30,2013-01-20 13:00,,PT_Normal,,,,,vhPPecSiskqssNMkln4ERg,,,,N,0,0,,,2013-11-05 11:09,2013-11-05 11:09,admin,admin,
396,102113,4512,26148,6590,0,N,N,N,CP_Drtn,TT_Task,DT_FixedDUR2,TK_NotStart,JF721.24,Instrumentation Delievered to Ma'aden & Installed,6965,432,0,208,0,1680,1680,208,560,0,560,,,,2013-06-23 07:00,2013-07-15 10:00,,2013-05-07 10:00,2013-05-29 13:00,2013-05-07 10:00,2013-05-29 13:00,2013-05-07 10:00,2013-05-29 13:00,2013-06-23 07:00,2013-07-15 10:00,,PT_Normal,,,,,yLDJ6Fl0d0qk1KnoEi5tiQ,,,,N,0,0,,,2013-11-05 11:09,2013-11-05 11:09,admin,admin,
397,102114,4512,26148,6590,0,N,N,N,CP_Drtn,TT_Task,DT_FixedDUR2,TK_NotStart,JF721.25,Ma'aden Instrumentation Inspection,6935,432,0,24,0,100,100,24,40,0,40,,,,2013-07-15 10:00,2013-07-17 14:00,,2013-05-29 13:00,2013-06-01 12:00,2013-05-29 13:00,2013-06-01 12:00,2013-05-29 13:00,2013-06-01 12:00,2013-07-15 10:00,2013-07-17 14:00,,PT_Normal,,,,,zpxMnl/bvUymyVeLExQqyA,,,,N,0,0,,,2013-11-05 11:09,2013-11-05 11:09,admin,admin,
398,102115,4512,26190,6590,0,N,N,N,CP_Drtn,TT_Task,DT_FixedDUR2,TK_NotStart,JF721.60,"Annular,Bottom & Sump",,432,0,24,0,0,0,24,0,0,0,,,,2012-10-31 11:00,2012-11-03 10:00,,2012-09-13 09:00,2012-09-16 08:00,2012-09-13 09:00,2012-09-16 08:00,2012-09-13 09:00,2012-09-16 08:00,2012-10-31 11:00,2012-11-03 10:00,,PT_Normal,,,,,fpHHYhhPM02j0OyEffpGhg,,,,N,0,0,,,2013-11-05 11:09,2013-11-05 11:09,admin,admin,
399,102116,4512,26190,6590,0,N,N,N,CP_Drtn,TT_Task,DT_FixedDUR2,TK_NotStart,JF721.61,"Shell Courses #1,#2,#3,#4",,864,432,64,0,0,0,64,0,0,0,,,,2012-12-22 11:00,2012-12-29 10:00,,2012-09-18 12:00,2012-09-25 11:00,2012-09-18 12:00,2012-09-25 11:00,2012-09-18 12:00,2012-09-25 11:00,2012-12-22 11:00,2012-12-29 10:00,,PT_Normal,,,,,TM0BgsSVgUmfrRVyo1NGxA,,,,N,0,0,,,2013-11-05 11:09,2013-11-05 11:09,admin,admin,
400,102117,4512,26190,6590,0,N,N,N,CP_Drtn,TT_Task,DT_FixedDUR2,TK_NotStart,JF721.62,Shell Nozzles & Manholes,,1232,800,48,0,0,0,48,0,0,0,,,,2013-02-16 11:00,2013-02-21 09:00,,2012-10-06 07:00,2012-10-10 15:00,2012-10-06 07:00,2012-10-10 15:00,2012-10-06 07:00,2012-10-10 15:00,2013-02-16 11:00,2013-02-21 09:00,,PT_Normal,,,,,TC6UQ1pvrkq1AvXZ58Lgvw,,,,N,0,0,,,2013-11-05 11:09,2013-11-05 11:09,admin,admin,
401,102118,4512,26190,6590,0,N,N,N,CP_Drtn,TT_Task,DT_FixedDUR2,TK_NotStart,JF721.63,"Platforms,Stairs & Handrails",,1288,856,72,0,0,0,72,0,0,0,,,,2013-03-23 14:00,2013-03-31 11:00,,2012-11-05 14:00,2012-11-13 11:00,2012-11-05 14:00,2012-11-13 11:00,2012-11-05 14:00,2012-11-13 11:00,2013-03-23 14:00,2013-03-31 11:00,,PT_Normal,,,,,89HT8szdDUWSKtf2t3MkDg,,,,N,0,0,,,2013-11-05 11:09,2013-11-05 11:09,admin,admin,
402,102119,4512,26190,6590,0,N,N,N,CP_Drtn,TT_Task,DT_FixedDUR2,TK_NotStart,JF721.64,Pipes & Fittings,,608,0,32,0,0,0,32,0,0,0,,,,2012-10-30 13:00,2012-11-03 10:00,,2012-08-24 12:30,2012-08-27 17:00,2012-08-24 12:30,2012-08-27 17:00,2012-08-24 12:30,2012-08-27 17:00,2012-10-30 13:00,2012-11-03 10:00,,PT_Normal,,,,,YBF+RGHgHU2j4h8lm/5i1Q,,,,N,0,0,,,2013-11-05 11:09,2013-11-05 11:09,admin,admin,
403,102120,4512,26190,6590,0,N,N,N,CP_Drtn,TT_Task,DT_FixedDUR2,TK_NotStart,JF721.65,Aluminum Dome Roof,,1384,952,736.016667,0,0,0,736.016667,0,0,0,,,,2013-01-20 13:00,2013-04-08 16:01,,2012-08-22 14:00,2012-11-11 15:01,2012-08-22 14:00,2012-11-11 15:01,2012-08-22 14:00,2012-11-11 15:01,2013-01-20 13:00,2013-04-08 16:01,,PT_Normal,,,,,1TB/Rk/hUUuPCf5fwTaUlg,,,,N,0,0,,,2013-11-05 11:09,2013-11-05 11:09,admin,admin,
404,102121,4512,26190,6590,0,N,N,N,CP_Drtn,TT_Task,DT_FixedDUR2,TK_NotStart,JF721.66,Paint Material,,696,88,32,0,0,0,32,0,0,0,,,,2012-10-30 13:00,2012-11-03 10:00,,2012-08-12 07:00,2012-08-15 09:00,2012-08-12 07:00,2012-08-15 09:00,2012-08-12 07:00,2012-08-15 09:00,2012-10-30 13:00,2012-11-03 10:00,,PT_Normal,,,,,IrVFUJGHGkugqYCier5iLQ,,,,N,0,0,,,2013-11-05 11:09,2013-11-05 11:09,admin,admin,
405,102122,4512,26191,6590,0,N,N,N,CP_Drtn,TT_Task,DT_FixedDUR2,TK_NotStart,JF721.32,Approval For vendor Specifcations,,696,0,64,0,0,0,64,0,0,0,,,,2012-10-18 12:00,2012-10-25 11:00,,2012-08-01 11:00,2012-08-08 10:00,2012-08-01 11:00,2012-08-08 10:00,2012-08-01 11:00,2012-08-08 10:00,2012-10-18 12:00,2012-10-25 11:00,,PT_Normal,,,,,H5POgdY3IkKWupELGPr1/w,,,,N,0,0,,,2013-11-05 11:09,2013-11-05 11:09,admin,admin,
406,102123,4512,26191,6590,0,N,N,N,CP_Drtn,TT_Task,DT_FixedDUR2,TK_NotStart,JF721.33,PO issued,,696,0,32,0,0,0,32,0,0,0,,,,2012-10-25 11:00,2012-10-30 13:00,,2012-08-08 10:00,2012-08-11 17:00,2012-08-08 10:00,2012-08-11 17:00,2012-08-08 10:00,2012-08-11 17:00,2012-10-25 11:00,2012-10-30 13:00,,PT_Normal,,,,,FOFdauuS0Um8H2EyZUxzcg,,,,N,0,0,,,2013-11-05 11:09,2013-11-05 11:09,admin,admin,
407,102124,4512,26151,6590,0,N,N,N,CP_Drtn,TT_FinMile,DT_FixedDrtn,TK_NotStart,1.6,Purchase Order placement for Major Materials,,1384,0,0,0,0,0,0,0,0,0,,,,2013-01-20 13:00,2013-01-20 13:00,,2012-08-22 14:00,2012-08-22 14:00,2012-08-22 14:00,2012-08-22 14:00,2012-08-22 14:00,2012-08-22 14:00,2013-01-20 13:00,2013-01-20 13:00,,PT_Normal,,,,,+HDIWxbqBk2bg8JkjpFx9A,,,,N,0,0,,,2013-11-05 11:09,2013-11-05 11:09,admin,admin,
408,102125,4512,26152,6590,0,N,N,N,CP_Drtn,TT_FinMile,DT_FixedDrtn,TK_NotStart,1.5,"Material Requisition approval for Steel plates, Cathodic Protection, field instruments etc.",,608,0,0,0,0,0,0,0,0,0,,,,2012-10-03 16:00,2012-10-03 16:00,,2012-07-27 10:30,2012-07-27 10:30,2012-07-27 10:30,2012-07-27 10:30,2012-07-27 10:30,2012-07-27 10:30,2012-10-03 16:00,2012-10-03 16:00,,PT_Normal,,,,,HNnJOX5CgUmamVg0vyuALQ,,,,N,0,0,,,2013-11-05 11:09,2013-11-05 11:09,admin,admin,
409,102126,4512,26153,6590,0,N,N,N,CP_Drtn,TT_FinMile,DT_FixedDrtn,TK_NotStart,1.11,Complete installation of Cathodic Protection and CP monitoring for the Storage Tanks.,,432,0,0,0,0,0,0,0,0,0,,,,2013-06-22 17:00,2013-06-22 17:00,,2013-05-07 10:00,2013-05-07 10:00,2013-05-07 10:00,2013-05-07 10:00,2013-05-07 10:00,2013-05-07 10:00,2013-06-22 17:00,2013-06-22 17:00,,PT_Normal,,,,,zSzX3fBJDEmHPZPW1giNKQ,,,,N,0,0,,,2013-11-05 11:09,2013-11-05 11:09,admin,admin,
410,102127,4512,26154,6590,0,N,N,N,CP_Drtn,TT_FinMile,DT_FixedDrtn,TK_NotStart,1.12,"Installation of only field instruments, which includes level transmitters and level gauges",,432,0,0,0,0,0,0,0,0,0,,,,2013-07-17 14:00,2013-07-17 14:00,,2013-06-01 12:00,2013-06-01 12:00,2013-06-01 12:00,2013-06-01 12:00,2013-06-01 12:00,2013-06-01 12:00,2013-07-17 14:00,2013-07-17 14:00,,PT_Normal,,,,,5WMqwQLP9USn2qNfwJzlyw,,,,N,0,0,,,2013-11-05 11:09,2013-11-05 11:09,admin,admin,
411,102128,4512,26155,6590,0,N,N,N,CP_Drtn,TT_FinMile,DT_FixedDrtn,TK_NotStart,1.8,Supply of Materials to Site,,608,176,0,0,0,0,0,0,0,0,,,,2012-11-03 10:00,2012-11-03 10:00,,2012-08-27 17:00,2012-08-27 17:00,2012-08-27 17:00,2012-08-27 17:00,2012-08-27 17:00,2012-08-27 17:00,2012-11-03 10:00,2012-11-03 10:00,,PT_Normal,,,,,sZwBeJ+VP02obIsFJ2w9sw,,,,N,0,0,,,2013-11-05 11:09,2013-11-05 11:09,admin,admin,
412,102129,4512,26198,6590,0,N,N,N,CP_Drtn,TT_Task,DT_FixedDUR2,TK_NotStart,JF721.127,"Erect & Fix Stairs, Handrails & Platforms on Shell",6942,432,0,32,0,250,250,32,70,0,70,,,,2013-03-31 11:00,2013-04-03 13:00,,2013-02-12 14:00,2013-02-16 11:00,2013-02-12 14:00,2013-02-16 11:00,2013-02-12 14:00,2013-02-16 11:00,2013-03-31 11:00,2013-04-03 13:00,,PT_Normal,,,,,YS9BKBVSp0WfK78DcbkSng,,,,N,0,0,,,2013-11-05 11:09,2013-11-05 11:09,admin,admin,
413,102130,4512,26198,6590,0,N,N,N,CP_Drtn,TT_Task,DT_FixedDUR2,TK_NotStart,JF721.128,Erect & Fix Roof Platforms & Handrails,6942,432,0,40,0,420,420,40,140,0,140,,,,2013-03-31 11:00,2013-04-04 11:00,,2013-02-12 14:00,2013-02-17 09:00,2013-02-12 14:00,2013-02-17 09:00,2013-02-12 14:00,2013-02-17 09:00,2013-03-31 11:00,2013-04-04 11:00,,PT_Normal,,,,,HVpbLDERK0Wi7nlFjLMKOw,,,,N,0,0,,,2013-11-05 11:09,2013-11-05 11:09,admin,admin,
414,102131,4512,26158,6590,0,N,N,N,CP_Drtn,TT_Task,DT_FixedDUR2,TK_NotStart,JF721.78,Erect & Weld Annular Plates,6942,432,0,120,0,1190,1190,120,350,0,350,,,,2012-11-03 10:00,2012-11-15 15:00,,2012-09-16 08:00,2012-09-29 08:00,2012-09-16 08:00,2012-09-29 08:00,2012-09-16 08:00,2012-09-29 08:00,2012-11-03 10:00,2012-11-15 15:00,,PT_Normal,,,,,SgpGjEbPd0iwwVaQ4AX4MA,,,,N,0,0,,,2013-11-05 11:09,2013-11-05 11:09,admin,admin,
415,102132,4512,26158,6590,0,N,N,N,CP_Drtn,TT_Task,DT_FixedDUR2,TK_NotStart,JF721.79,Erect & Tack Bottom Plates,6951,432,0,160,0,960,960,160,420,0,420,,,,2012-11-15 15:00,2012-12-03 10:00,,2012-09-29 08:00,2012-10-16 08:00,2012-09-29 08:00,2012-10-16 08:00,2012-09-29 08:00,2012-10-16 08:00,2012-11-15 15:00,2012-12-03 10:00,,PT_Normal,,,,,S5hXFLDyg0eynjKZMPDs4w,,,,N,0,0,,,2013-11-05 11:09,2013-11-05 11:09,admin,admin,
416,102133,4512,26158,6590,0,N,N,N,CP_Drtn,TT_Task,DT_FixedDUR2,TK_NotStart,JF721.80,Welding of Bottom Plates,6968,432,0,200,0,1050,1050,200,350,0,350,,,,2012-12-03 10:00,2012-12-24 15:00,,2012-10-16 08:00,2012-11-08 08:00,2012-10-16 08:00,2012-11-08 08:00,2012-10-16 08:00,2012-11-08 08:00,2012-12-03 10:00,2012-12-24 15:00,,PT_Normal,,,,,KZPrUtzx/UW98pB6gjDo4w,,,,N,0,0,,,2013-11-05 11:09,2013-11-05 11:09,admin,admin,
417,102134,4512,26158,6590,0,N,N,N,CP_Drtn,TT_Task,DT_FixedDUR2,TK_NotStart,JF721.81,Visual Inspection & Cleaning,6935,432,0,16,0,110,110,16,40,0,40,,,,2012-12-24 15:00,2012-12-26 11:00,,2012-11-08 08:00,2012-11-10 09:00,2012-11-08 08:00,2012-11-10 09:00,2012-11-08 08:00,2012-11-10 09:00,2012-12-24 15:00,2012-12-26 11:00,,PT_Normal,,,,,i2Zk+zSr8U6Us08Iuz216Q,,,,N,0,0,,,2013-11-05 11:09,2013-11-05 11:09,admin,admin,
418,102135,4512,26158,6590,0,N,N,N,CP_Drtn,TT_Task,DT_FixedDUR2,TK_NotStart,JF721.82,Carry Out NDT & Vaccuum Box Test,6935,432,0,24,0,240,240,24,80,0,80,,,,2012-12-26 11:00,2012-12-29 10:00,,2012-11-10 09:00,2012-11-12 13:00,2012-11-10 09:00,2012-11-12 13:00,2012-11-10 09:00,2012-11-12 13:00,2012-12-26 11:00,2012-12-29 10:00,,PT_Normal,,,,,R2q9//7+pkqUgGquhwLFLA,,,,N,0,0,,,2013-11-05 11:09,2013-11-05 11:09,admin,admin,
419,102136,4512,26159,6590,0,N,N,N,CP_Drtn,TT_Task,DT_FixedDUR2,TK_NotStart,JF721.118,MArk & Cut Holes,6964,432,0,40,0,180,180,40,60,0,60,,,,2013-02-21 09:00,2013-02-25 14:00,,2013-01-06 15:00,2013-01-10 15:00,2013-01-06 15:00,2013-01-10 15:00,2013-01-06 15:00,2013-01-10 15:00,2013-02-21 09:00,2013-02-25 14:00,,PT_Normal,,,,,92di5OW+MkWaDL9TlyzvlA,,,,N,0,0,,,2013-11-05 11:09,2013-11-05 11:09,admin,admin,
420,102137,4512,26159,6590,0,N,N,N,CP_Drtn,TT_Task,DT_FixedDUR2,TK_NotStart,JF721.119,"Fit & Tack Manholes ,Nozzles on Shell",6958,432,0,40,0,220,220,40,80,0,80,,,,2013-02-22 09:30,2013-02-26 12:00,,2013-01-07 13:00,2013-01-12 08:00,2013-01-07 13:00,2013-01-12 08:00,2013-01-07 13:00,2013-01-12 08:00,2013-02-22 09:30,2013-02-26 12:00,,PT_Normal,,,,,34KfcyqsxECXpMNEfeSlOQ,,,,N,0,0,,,2013-11-05 11:09,2013-11-05 11:09,admin,admin,
421,102138,4512,26159,6590,0,N,N,N,CP_Drtn,TT_Task,DT_FixedDUR2,TK_NotStart,JF721.120,Weld MAnholes & Nozzles on shell,6968,432,0,40,0,260,260,40,170,0,170,,,,2013-02-23 10:00,2013-02-27 10:00,,2013-01-08 11:00,2013-01-12 16:00,2013-01-08 11:00,2013-01-12 16:00,2013-01-08 11:00,2013-01-12 16:00,2013-02-23 10:00,2013-02-27 10:00,,PT_Normal,,,,,MhX/z4cRoUaCltTqFB49EA,,,,N,0,0,,,2013-11-05 11:09,2013-11-05 11:09,admin,admin,
422,102139,4512,26159,6590,0,N,N,N,CP_Drtn,TT_Task,DT_FixedDUR2,TK_NotStart,JF721.121,NDT on Manholes & Nozzles on shell,6965,432,0,32,0,100,100,32,20,0,20,,,,2013-02-27 10:00,2013-03-02 17:00,,2013-01-12 16:00,2013-01-16 08:00,2013-01-12 16:00,2013-01-16 08:00,2013-01-12 16:00,2013-01-16 08:00,2013-02-27 10:00,2013-03-02 17:00,,PT_Normal,,,,,Y9UifEiBtU6IoTcMFLE2eQ,,,,N,0,0,,,2013-11-05 11:09,2013-11-05 11:09,admin,admin,
423,102140,4512,26160,6590,0,N,N,N,CP_Drtn,TT_Task,DT_FixedDUR2,TK_NotStart,JF721.122,Prepare Tank for Roof Contruction,6914,432,0,40,0,260,260,40,60,0,60,,,,2013-02-27 10:00,2013-03-03 15:00,,2013-01-12 16:00,2013-01-16 16:00,2013-01-12 16:00,2013-01-16 16:00,2013-01-12 16:00,2013-01-16 16:00,2013-02-27 10:00,2013-03-03 15:00,,PT_Normal,,,,,zisPnG/VNEuu3VHWmApU7A,,,,N,0,0,,,2013-11-05 11:09,2013-11-05 11:09,admin,admin,
424,102141,4512,26160,6590,0,N,N,N,CP_Drtn,TT_Task,DT_FixedDUR2,TK_NotStart,JF721.123,Install Shoe Support Structure on Shell,6964,432,0,48,0,580,580,48,120,0,120,,,,2013-03-03 15:00,2013-03-09 08:00,,2013-01-16 16:00,2013-01-22 09:00,2013-01-16 16:00,2013-01-22 09:00,2013-01-16 16:00,2013-01-22 09:00,2013-03-03 15:00,2013-03-09 08:00,,PT_Normal,,,,,rkn4XFNDzUOD8QaW34nxwA,,,,N,0,0,,,2013-11-05 11:09,2013-11-05 11:09,admin,admin,
425,102142,4512,26160,6590,0,N,N,N,CP_Drtn,TT_Task,DT_FixedDUR2,TK_NotStart,JF721.124,Install / Assemble Roof Rafters,6951,432,0,104,0,1500,1500,104,300,0,300,,,,2013-03-09 08:00,2013-03-19 17:00,,2013-01-22 09:00,2013-02-01 12:30,2013-01-22 09:00,2013-02-01 12:30,2013-01-22 09:00,2013-02-01 12:30,2013-03-09 08:00,2013-03-19 17:00,,PT_Normal,,,,,b2owWjMjGkOBDfmxyanmpA,,,,N,0,0,,,2013-11-05 11:09,2013-11-05 11:09,admin,admin,
426,102143,4512,26160,6590,0,N,N,N,CP_Drtn,TT_Task,DT_FixedDUR2,TK_NotStart,JF721.125,Installation of Roof Plates,6914,432,0,72,0,900,900,72,180,0,180,,,,2013-03-20 07:00,2013-03-27 14:00,,2013-02-01 12:30,2013-02-09 12:00,2013-02-01 12:30,2013-02-09 12:00,2013-02-01 12:30,2013-02-09 12:00,2013-03-20 07:00,2013-03-27 14:00,,PT_Normal,,,,,EdYYm31M4UWpZVifvZWhyg,,,,N,0,0,,,2013-11-05 11:09,2013-11-05 11:09,admin,admin,
427,102144,4512,26160,6590,0,N,N,N,CP_Drtn,TT_Task,DT_FixedDUR2,TK_NotStart,JF721.126,Install Roof Manholes & Nozzles,6964,432,0,32,0,160,160,32,30,0,30,,,,2013-03-27 14:00,2013-03-31 11:00,,2013-02-09 12:00,2013-02-12 14:00,2013-02-09 12:00,2013-02-12 14:00,2013-02-09 12:00,2013-02-12 14:00,2013-03-27 14:00,2013-03-31 11:00,,PT_Normal,,,,,d6fQWmfjVUKjpMbGlewaFg,,,,N,0,0,,,2013-11-05 11:09,2013-11-05 11:09,admin,admin,
428,102145,4512,26161,6590,0,N,N,N,CP_Drtn,TT_Task,DT_FixedDUR2,TK_NotStart,JF721.150,Concrete testing,6916,432,0,32,0,210,210,32,60,0,60,,,,2013-07-25 11:00,2013-07-29 08:00,,2013-06-09 09:00,2013-06-12 11:00,2013-06-09 09:00,2013-06-12 11:00,2013-06-09 09:00,2013-06-12 11:00,2013-07-25 11:00,2013-07-29 08:00,,PT_Normal,,,,,OOmlREt7pkuEOXioWj8PEA,,,,N,0,0,,,2013-11-05 11:09,2013-11-05 11:09,admin,admin,
429,102146,4512,26161,6590,0,N,N,N,CP_Drtn,TT_Task,DT_FixedDUR2,TK_NotStart,JF721.151,RT testing for the welding,6942,432,0,40,0,240,240,40,80,0,80,,,,2013-07-29 08:00,2013-08-02 10:30,,2013-06-12 11:00,2013-06-16 16:00,2013-06-12 11:00,2013-06-16 16:00,2013-06-12 11:00,2013-06-16 16:00,2013-07-29 08:00,2013-08-02 10:30,,PT_Normal,,,,,7S8F9a9kTUi5/I0pP3Xn1g,,,,N,0,0,,,2013-11-05 11:09,2013-11-05 11:09,admin,admin,
430,102147,4512,26161,6590,0,N,N,N,CP_Drtn,TT_Task,DT_FixedDUR2,TK_NotStart,JF721.152,Sand testing,6915,432,0,40,0,240,240,40,80,0,80,,,,2013-08-02 10:30,2013-08-06 13:00,,2013-06-16 16:00,2013-06-20 16:00,2013-06-16 16:00,2013-06-20 16:00,2013-06-16 16:00,2013-06-20 16:00,2013-08-02 10:30,2013-08-06 13:00,,PT_Normal,,,,,YA+IDxWuNESVw2gECsv8ig,,,,N,0,0,,,2013-11-05 11:09,2013-11-05 11:09,admin,admin,
431,102148,4512,26161,6590,0,N,N,N,CP_Drtn,TT_Task,DT_FixedDUR2,TK_NotStart,JF721.153,Tank Calibration,6965,432,0,24,0,140,140,24,40,0,40,,,,2013-08-06 13:00,2013-08-08 17:00,,2013-06-20 16:00,2013-06-23 15:00,2013-06-20 16:00,2013-06-23 15:00,2013-06-20 16:00,2013-06-23 15:00,2013-08-06 13:00,2013-08-08 17:00,,PT_Normal,,,,,mfvTijMiOkK0B8xgwGqRZw,,,,N,0,0,,,2013-11-05 11:09,2013-11-05 11:09,admin,admin,
432,102149,4512,26162,6590,0,N,N,N,CP_Drtn,TT_Task,DT_FixedDUR2,TK_NotStart,JF721.129,Install Blind Flanges,6965,432,0,32,0,180,180,32,50,0,50,,,,2013-04-04 11:00,2013-04-08 08:00,,2013-02-17 09:00,2013-02-20 11:00,2013-02-17 09:00,2013-02-20 11:00,2013-02-17 09:00,2013-02-20 11:00,2013-04-04 11:00,2013-04-08 08:00,,PT_Normal,,,,,CW41eMV03kqp5Zfy3ScNEQ,,,,N,0,0,,,2013-11-05 11:09,2013-11-05 11:09,admin,admin,
433,102150,4512,26162,6590,0,N,N,N,CP_Drtn,TT_Task,DT_FixedDUR2,TK_NotStart,JF721.130,Tank Water Filling,6965,432,0,232,0,1820,1820,232,780,0,780,,,,2013-04-08 08:00,2013-05-02 15:00,,2013-02-20 11:00,2013-03-17 13:00,2013-02-20 11:00,2013-03-17 13:00,2013-02-20 11:00,2013-03-17 13:00,2013-04-08 08:00,2013-05-02 15:00,,PT_Normal,,,,,YEsfHLOWVkazLTAhVHlrGg,,,,N,0,0,,,2013-11-05 11:09,2013-11-05 11:09,admin,admin,
434,102151,4512,26162,6590,0,N,N,N,CP_Drtn,TT_Task,DT_FixedDUR2,TK_NotStart,JF721.131,Hold Water for 48 Hours,6965,432,0,40,0,120,120,40,40,0,40,,,,2013-05-02 15:00,2013-05-07 10:00,,2013-03-17 13:00,2013-03-21 13:00,2013-03-17 13:00,2013-03-21 13:00,2013-03-17 13:00,2013-03-21 13:00,2013-05-02 15:00,2013-05-07 10:00,,PT_Normal,,,,,H0UdMVXjc0ezD50cbQw+IA,,,,N,0,0,,,2013-11-05 11:09,2013-11-05 11:09,admin,admin,
435,102152,4512,26162,6590,0,N,N,N,CP_Drtn,TT_Task,DT_FixedDUR2,TK_NotStart,JF721.132,Drain Water from Tank,6965,432,0,112,0,1560,1560,112,260,0,260,,,,2013-05-07 10:00,2013-05-19 12:00,,2013-03-21 13:00,2013-04-02 15:00,2013-03-21 13:00,2013-04-02 15:00,2013-03-21 13:00,2013-04-02 15:00,2013-05-07 10:00,2013-05-19 12:00,,PT_Normal,,,,,SV6UG59+XUexU4r52G7wPg,,,,N,0,0,,,2013-11-05 11:09,2013-11-05 11:09,admin,admin,
436,102153,4512,26162,6590,0,N,N,N,CP_Drtn,TT_Task,DT_FixedDUR2,TK_NotStart,JF721.133,Clean & Dry Out Tank,6942,432,0,24,0,280,280,24,40,0,40,,,,2013-05-19 12:00,2013-05-21 16:00,,2013-04-02 15:00,2013-04-05 11:30,2013-04-02 15:00,2013-04-05 11:30,2013-04-02 15:00,2013-04-05 11:30,2013-05-19 12:00,2013-05-21 16:00,,PT_Normal,,,,,Ga++CDqbqEmV5xpAKZ7Flw,,,,N,0,0,,,2013-11-05 11:09,2013-11-05 11:09,admin,admin,
437,102154,4512,26163,6590,0,N,N,N,CP_Drtn,TT_Task,DT_FixedDUR2,TK_NotStart,JF721.116,Erect & Tack Curve Angle,6942,432,0,40,0,260,260,40,100,0,100,,,,2013-02-11 08:00,2013-02-15 10:30,,2012-12-27 09:00,2012-12-31 14:00,2012-12-27 09:00,2012-12-31 14:00,2012-12-27 09:00,2012-12-31 14:00,2013-02-11 08:00,2013-02-15 10:30,,PT_Normal,,,,,JrW0cdMw6USy5D5/lydT2g,,,,N,0,0,,,2013-11-05 11:09,2013-11-05 11:09,admin,admin,
438,102155,4512,26163,6590,0,N,N,N,CP_Drtn,TT_Task,DT_FixedDUR2,TK_NotStart,JF721.117,Weld Curve Angle,6942,432,0,56,0,560,560,56,280,0,280,,,,2013-02-15 10:30,2013-02-21 09:00,,2012-12-31 14:00,2013-01-06 15:00,2012-12-31 14:00,2013-01-06 15:00,2012-12-31 14:00,2013-01-06 15:00,2013-02-15 10:30,2013-02-21 09:00,,PT_Normal,,,,,nzEyVK+fyEO4oG42+YDQWA,,,,N,0,0,,,2013-11-05 11:09,2013-11-05 11:09,admin,admin,
439,102156,4512,26164,6590,0,N,N,N,CP_Drtn,TT_Task,DT_FixedDUR2,TK_NotStart,JF721.139,Erect Scafolding Inside Tank,6942,432,0,56,0,1040,1040,56,120,0,120,,,,2013-05-21 16:00,2013-05-27 17:00,,2013-04-05 11:30,2013-04-11 10:00,2013-04-05 11:30,2013-04-11 10:00,2013-04-05 11:30,2013-04-11 10:00,2013-05-21 16:00,2013-05-27 17:00,,PT_Normal,,,,,uM8yyX/SMkSMbP6E3fAg2Q,,,,N,0,0,,,2013-11-05 11:09,2013-11-05 11:09,admin,admin,
440,102157,4512,26164,6590,0,N,N,N,CP_Drtn,TT_Task,DT_FixedDUR2,TK_NotStart,JF721.140,Internal Shell Blast & Prime,6949,432,0,32,0,480,480,32,60,0,60,,,,2013-05-24 12:30,2013-05-27 17:00,,2013-04-08 08:00,2013-04-11 10:00,2013-04-08 08:00,2013-04-11 10:00,2013-04-08 08:00,2013-04-11 10:00,2013-05-24 12:30,2013-05-27 17:00,,PT_Normal,,,,,+6Fyuzg6D0OWb5+HpoBIFQ,,,,N,0,0,,,2013-11-05 11:09,2013-11-05 11:09,admin,admin,
441,102158,4512,26164,6590,0,N,N,N,CP_Drtn,TT_Task,DT_FixedDUR2,TK_NotStart,JF721.141,Internal Shell Secondary & Final Coat,6950,432,0,32,0,510,510,32,60,0,60,,,,2013-05-28 07:00,2013-05-31 11:30,,2013-04-11 10:00,2013-04-14 17:00,2013-04-11 10:00,2013-04-14 17:00,2013-04-11 10:00,2013-04-14 17:00,2013-05-28 07:00,2013-05-31 11:30,,PT_Normal,,,,,BaO0miGh4EWCm1BGdUh1cg,,,,N,0,0,,,2013-11-05 11:09,2013-11-05 11:09,admin,admin,
442,102159,4512,26164,6590,0,N,N,N,CP_Drtn,TT_Task,DT_FixedDUR2,TK_NotStart,JF721.142,Internal Shell Paint Inspection,6965,432,0,16,0,180,180,16,20,0,20,,,,2013-05-28 07:00,2013-05-29 13:00,,2013-04-11 10:00,2013-04-13 11:00,2013-04-11 10:00,2013-04-13 11:00,2013-04-11 10:00,2013-04-13 11:00,2013-05-28 07:00,2013-05-29 13:00,,PT_Normal,,,,,/zuc8L7pbUij8mYdr5stPg,,,,N,0,0,,,2013-11-05 11:09,2013-11-05 11:09,admin,admin,
443,102160,4512,26164,6590,0,N,N,N,CP_Drtn,TT_Task,DT_FixedDUR2,TK_NotStart,JF721.143,Dismantle Internal Scaffolding,6942,432,0,32,0,640,640,32,80,0,80,,,,2013-05-29 13:00,2013-06-02 10:00,,2013-04-13 11:00,2013-04-16 13:00,2013-04-13 11:00,2013-04-16 13:00,2013-04-13 11:00,2013-04-16 13:00,2013-05-29 13:00,2013-06-02 10:00,,PT_Normal,,,,,96UPj4iK50GDU8R6zfmPRg,,,,N,0,0,,,2013-11-05 11:09,2013-11-05 11:09,admin,admin,
444,102161,4512,26164,6590,0,N,N,N,CP_Drtn,TT_Task,DT_FixedDUR2,TK_NotStart,JF721.144,Bottom/Annular Plate Blast & Prime,6949,432,0,24,0,260,260,24,40,0,40,,,,2013-06-02 10:00,2013-06-04 14:00,,2013-04-16 13:00,2013-04-18 17:00,2013-04-16 13:00,2013-04-18 17:00,2013-04-16 13:00,2013-04-18 17:00,2013-06-02 10:00,2013-06-04 14:00,,PT_Normal,,,,,T1RXX/btaUOMcuwbNaTGGg,,,,N,0,0,,,2013-11-05 11:09,2013-11-05 11:09,admin,admin,
445,102162,4512,26164,6590,0,N,N,N,CP_Drtn,TT_Task,DT_FixedDUR2,TK_NotStart,JF721.145,Bottom/Annular Plate Secondary & Final Coat,6950,432,0,24,0,200,200,24,40,0,40,,,,2013-06-04 14:00,2013-06-07 10:30,,2013-04-19 09:30,2013-04-21 16:00,2013-04-19 09:30,2013-04-21 16:00,2013-04-19 09:30,2013-04-21 16:00,2013-06-04 14:00,2013-06-07 10:30,,PT_Normal,,,,,csQooSpdeEWWlU6AQB4taw,,,,N,0,0,,,2013-11-05 11:09,2013-11-05 11:09,admin,admin,
446,102163,4512,26164,6590,0,N,N,N,CP_Drtn,TT_Task,DT_FixedDUR2,TK_NotStart,JF721.146,Bottom/Annular Plate Paint Inspection,6942,432,0,16,0,90,90,16,20,0,20,,,,2013-06-07 10:30,2013-06-09 09:00,,2013-04-21 16:00,2013-04-23 12:00,2013-04-21 16:00,2013-04-23 12:00,2013-04-21 16:00,2013-04-23 12:00,2013-06-07 10:30,2013-06-09 09:00,,PT_Normal,,,,,9q5Oe9S9FUOyUrGQi2QTig,,,,N,0,0,,,2013-11-05 11:09,2013-11-05 11:09,admin,admin,
447,102164,4512,26165,6590,0,N,N,N,CP_Drtn,TT_Task,DT_FixedDUR2,TK_NotStart,JF721.147,Tanks lighting,6942,432,0,24,0,200,200,24,40,0,40,,,,2013-07-17 14:00,2013-07-20 13:00,,2013-06-01 12:00,2013-06-03 16:00,2013-06-01 12:00,2013-06-03 16:00,2013-06-01 12:00,2013-06-03 16:00,2013-07-17 14:00,2013-07-20 13:00,,PT_Normal,,,,,rgHUNbKLpkKGJBElS4exdw,,,,N,0,0,,,2013-11-05 11:09,2013-11-05 11:09,admin,admin,
448,102165,4512,26165,6590,0,N,N,N,CP_Drtn,TT_Task,DT_FixedDUR2,TK_NotStart,JF721.148,Tanks lighting  protection,6942,432,0,24,0,200,200,24,40,0,40,,,,2013-07-20 13:00,2013-07-22 17:00,,2013-06-03 16:00,2013-06-06 10:00,2013-06-03 16:00,2013-06-06 10:00,2013-06-03 16:00,2013-06-06 10:00,2013-07-20 13:00,2013-07-22 17:00,,PT_Normal,,,,,d00A8ZO/TE+acJSf/cHqAw,,,,N,0,0,,,2013-11-05 11:09,2013-11-05 11:09,admin,admin,
449,102166,4512,26165,6590,0,N,N,N,CP_Drtn,TT_Task,DT_FixedDUR2,TK_NotStart,JF721.149,Grounding system,6942,432,0,24,0,160,160,24,40,0,40,,,,2013-07-23 07:00,2013-07-25 11:00,,2013-06-06 10:00,2013-06-09 09:00,2013-06-06 10:00,2013-06-09 09:00,2013-06-06 10:00,2013-06-09 09:00,2013-07-23 07:00,2013-07-25 11:00,,PT_Normal,,,,,jkj2n08UgEes1+vPFso9/w,,,,N,0,0,,,2013-11-05 11:09,2013-11-05 11:09,admin,admin,
450,102167,4512,26166,6590,0,N,N,N,CP_Drtn,TT_Task,DT_FixedDUR2,TK_NotStart,JF721.83,Prepare Shell Course # 1 for Erection,6951,432,0,32,0,140,140,32,40,0,40,,,,2012-12-29 10:00,2013-01-01 12:00,,2012-11-12 13:00,2012-11-15 15:00,2012-11-12 13:00,2012-11-15 15:00,2012-11-12 13:00,2012-11-15 15:00,2012-12-29 10:00,2013-01-01 12:00,,PT_Normal,,,,,nPqvAxCgaE2i2AzVHB58Mg,,,,N,0,0,,,2013-11-05 11:09,2013-11-05 11:09,admin,admin,
451,102168,4512,26166,6590,0,N,N,N,CP_Drtn,TT_Task,DT_FixedDUR2,TK_NotStart,JF721.84,Erect & Tack Shell Course # 1,6951,432,0,40,0,320,320,40,140,0,140,,,,2013-01-01 12:00,2013-01-05 17:00,,2012-11-15 15:00,2012-11-20 10:00,2012-11-15 15:00,2012-11-20 10:00,2012-11-15 15:00,2012-11-20 10:00,2013-01-01 12:00,2013-01-05 17:00,,PT_Normal,,,,,IiGs7fTN+UCTLH4/AHzcVg,,,,N,0,0,,,2013-11-05 11:09,2013-11-05 11:09,admin,admin,
452,102169,4512,26166,6590,0,N,N,N,CP_Drtn,TT_Task,DT_FixedDUR2,TK_NotStart,JF721.85,Weld Outer Vertical Seam,6942,432,0,40,0,400,400,40,200,0,200,,,,2013-01-02 10:00,2013-01-06 15:00,,2012-11-17 08:00,2012-11-21 08:00,2012-11-17 08:00,2012-11-21 08:00,2012-11-17 08:00,2012-11-21 08:00,2013-01-02 10:00,2013-01-06 15:00,,PT_Normal,,,,,rdNusc8hpUCtXFcD3vENGA,,,,N,0,0,,,2013-11-05 11:09,2013-11-05 11:09,admin,admin,
453,102170,4512,26166,6590,0,N,N,N,CP_Drtn,TT_Task,DT_FixedDUR2,TK_NotStart,JF721.86,Backgouge & NDT Inside Vertical Seam,6965,432,0,40,0,360,360,40,200,0,200,,,,2013-01-03 08:00,2013-01-07 13:00,,2012-11-17 16:00,2012-11-21 16:00,2012-11-17 16:00,2012-11-21 16:00,2012-11-17 16:00,2012-11-21 16:00,2013-01-03 08:00,2013-01-07 13:00,,PT_Normal,,,,,a+LRbPDOq0aLUgY4lDrumg,,,,N,0,0,,,2013-11-05 11:09,2013-11-05 11:09,admin,admin,
454,102171,4512,26166,6590,0,N,N,N,CP_Drtn,TT_Task,DT_FixedDUR2,TK_NotStart,JF721.87,Weld Inside Vertical Seam,6968,432,0,40,0,380,380,40,200,0,200,,,,2013-01-03 16:00,2013-01-08 11:00,,2012-11-18 14:00,2012-11-22 14:00,2012-11-18 14:00,2012-11-22 14:00,2012-11-18 14:00,2012-11-22 14:00,2013-01-03 16:00,2013-01-08 11:00,,PT_Normal,,,,,HsFDzAaZ0kuM1kFpRIEe9w,,,,N,0,0,,,2013-11-05 11:09,2013-11-05 11:09,admin,admin,
455,102172,4512,26167,6590,0,N,N,N,CP_Drtn,TT_Task,DT_FixedDUR2,TK_NotStart,JF721.67,Rental For Workers & Engineers Accomodation with Facilities,6915,560,0,40,0,40,40,40,40,0,40,,,,2012-09-05 12:00,2012-09-09 17:00,,2012-07-04 07:00,2012-07-08 12:00,2012-07-04 07:00,2012-07-08 12:00,2012-07-04 07:00,2012-07-08 12:00,2012-09-05 12:00,2012-09-09 17:00,,PT_Normal,,,,,l6sO15dbAEKO0votvDwuDA,,,,N,0,0,,,2013-11-05 11:09,2013-11-05 11:09,admin,admin,
456,102173,4512,26167,6590,0,N,N,N,CP_Drtn,TT_Task,DT_FixedDUR2,TK_NotStart,JF721.69,Ma'aden Inspection & Approval for Portacabins,6915,560,0,16,0,80,80,16,30,0,30,,,,2012-09-27 07:00,2012-09-29 08:00,,2012-07-25 12:00,2012-07-27 10:30,2012-07-25 12:00,2012-07-27 10:30,2012-07-25 12:00,2012-07-27 10:30,2012-09-27 07:00,2012-09-29 08:00,,PT_Normal,,,,,bnGaJWN3mkSlZgKz4TGyFw,,,,N,0,0,,,2013-11-05 11:09,2013-11-05 11:09,admin,admin,
457,102174,4512,26167,6590,0,N,N,N,CP_Drtn,TT_Task,DT_FixedDUR2,TK_NotStart,JF721.68,Complete Mobilize AZ Equipment to Site & Prepare the site fabrication yard,6965,560,0,200,0,2160,2160,200,960,0,960,,,,2012-09-05 12:00,2012-09-26 17:00,,2012-07-04 07:00,2012-07-25 12:00,2012-07-04 07:00,2012-07-25 12:00,2012-07-04 07:00,2012-07-25 12:00,2012-09-05 12:00,2012-09-26 17:00,,PT_Normal,,,,,g8fk0Vpgvkmb7iTtpEzULw,,,,N,0,0,,,2013-11-05 11:09,2013-11-05 11:09,admin,admin,
458,102175,4512,26168,6590,0,N,N,N,CP_Drtn,TT_Task,DT_FixedDUR2,TK_NotStart,JF721.97,Prepare Shell Course # 3 for Erection,6942,432,0,32,0,140,140,32,30,0,30,,,,2013-01-15 10:00,2013-01-18 14:30,,2012-11-29 13:00,2012-12-03 10:00,2012-11-29 13:00,2012-12-03 10:00,2012-11-29 13:00,2012-12-03 10:00,2013-01-15 10:00,2013-01-18 14:30,,PT_Normal,,,,,b7Gu/ReNgUCB3F3OvWrO6A,aa2f8K/jKk+B4WqT5nBHdg,,,N,0,0,,,2013-11-05 11:09,2013-11-05 11:09,admin,admin,
459,102176,4512,26168,6590,0,N,N,N,CP_Drtn,TT_Task,DT_FixedDUR2,TK_NotStart,JF721.98,Erect & Tack Shell Course # 3,6951,432,0,40,0,300,300,40,100,0,100,,,,2013-01-19 07:00,2013-01-22 17:00,,2012-12-03 10:00,2012-12-07 12:30,2012-12-03 10:00,2012-12-07 12:30,2012-12-03 10:00,2012-12-07 12:30,2013-01-19 07:00,2013-01-22 17:00,,PT_Normal,,,,,TbwzoeoMpUeAe8Z/8Mxzyw,kdyi/RTY7E2TnBhVkMDvOA,,,N,0,0,,,2013-11-05 11:09,2013-11-05 11:09,admin,admin,
460,102177,4512,26168,6590,0,N,N,N,CP_Drtn,TT_Task,DT_FixedDUR2,TK_NotStart,JF721.99,Weld Outer Vertical Seam,6965,432,0,48,0,570,570,48,330,0,330,,,,2013-01-19 15:00,2013-01-24 13:00,,2012-12-04 08:00,2012-12-09 11:00,2012-12-04 08:00,2012-12-09 11:00,2012-12-04 08:00,2012-12-09 11:00,2013-01-19 15:00,2013-01-24 13:00,,PT_Normal,,,,,eg4tTdP1Rk+p0geTkHOpkg,86Bvz8VvCUucVvkCnUtGgg,,,N,0,0,,,2013-11-05 11:09,2013-11-05 11:09,admin,admin,
461,102178,4512,26168,6590,0,N,N,N,CP_Drtn,TT_Task,DT_FixedDUR2,TK_NotStart,JF721.100,Backgouge & NDT Inside Vertical Seam,6942,432,0,40,0,200,200,40,40,0,40,,,,2013-01-20 13:00,2013-01-24 13:00,,2012-12-04 16:00,2012-12-09 11:00,2012-12-04 16:00,2012-12-09 11:00,2012-12-04 16:00,2012-12-09 11:00,2013-01-20 13:00,2013-01-24 13:00,,PT_Normal,,,,,Ck8Sct3uSUaZ2Ru9CiERsg,HGM1vwCLFEqi4E2FBKOOXQ,,,N,0,0,,,2013-11-05 11:09,2013-11-05 11:09,admin,admin,
462,102179,4512,26168,6590,0,N,N,N,CP_Drtn,TT_Task,DT_FixedDUR2,TK_NotStart,JF721.101,Weld Inside Vertical Seam,6942,432,0,40,0,380,380,40,220,0,220,,,,2013-01-21 11:00,2013-01-25 13:30,,2012-12-05 14:00,2012-12-10 09:00,2012-12-05 14:00,2012-12-10 09:00,2012-12-05 14:00,2012-12-10 09:00,2013-01-21 11:00,2013-01-25 13:30,,PT_Normal,,,,,rYP4Ne4lIEiXP1NOd4DsYQ,LHI8cryx3Uy+wfN0GANeXg,,,N,0,0,,,2013-11-05 11:09,2013-11-05 11:09,admin,admin,
463,102180,4512,26168,6590,0,N,N,N,CP_Drtn,TT_Task,DT_FixedDUR2,TK_NotStart,JF721.102,"""""Fit & Tack Horizontal Seam between Shell Course # 2 & 3""""",6942,432,0,40,0,240,240,40,80,0,80,,,,2013-01-22 09:00,2013-01-26 14:00,,2012-12-06 12:00,2012-12-10 17:00,2012-12-06 12:00,2012-12-10 17:00,2012-12-06 12:00,2012-12-10 17:00,2013-01-22 09:00,2013-01-26 14:00,,PT_Normal,,,,,k2+bL0NtpE+77Y8Di6pEgA,x/t6JEwh8EWnJncbLfweow,,,N,0,0,,,2013-11-05 11:09,2013-11-05 11:09,admin,admin,
464,102181,4512,26168,6590,0,N,N,N,CP_Drtn,TT_Task,DT_FixedDUR2,TK_NotStart,JF721.103,"""""Weld Outer Horizontal Seam between Shell Course # 2 & 3""""",6942,432,0,56,0,680,680,56,440,0,440,,,,2013-01-23 07:00,2013-01-28 10:00,,2012-12-07 12:30,2012-12-13 11:00,2012-12-07 12:30,2012-12-13 11:00,2012-12-07 12:30,2012-12-13 11:00,2013-01-23 07:00,2013-01-28 10:00,,PT_Normal,,,,,dSprnxUH/EqrlOMY1k71QQ,andCbcI3A0aC9hARQKwuqg,,,N,0,0,,,2013-11-05 11:09,2013-11-05 11:09,admin,admin,
465,102182,4512,26168,6590,0,N,N,N,CP_Drtn,TT_Task,DT_FixedDUR2,TK_NotStart,JF721.104,"""""Backgouge & NDT Inside Horizontal Seam between Shell Course# 2 & 3""""",6942,432,0,40,0,162,162,40,40,0,40,,,,2013-01-23 15:00,2013-01-27 19:00,,2012-12-08 13:00,2012-12-12 13:00,2012-12-08 13:00,2012-12-12 13:00,2012-12-08 13:00,2012-12-12 13:00,2013-01-23 15:00,2013-01-27 19:00,,PT_Normal,,,,,J0BlEO0MzU6mbmBA9gz3MA,SS/dxiHsYEqPCSm6VbYpYw,,,N,0,0,,,2013-11-05 11:09,2013-11-05 11:09,admin,admin,
466,102183,4512,26168,6590,0,N,N,N,CP_Drtn,TT_Task,DT_FixedDUR2,TK_NotStart,JF721.105,"Weld Inner Horizontal Seam between Shell Course # 2 & 3""""",6942,432,0,40,0,340,340,40,220,0,220,,,,2013-01-24 13:00,2013-01-28 10:00,,2012-12-09 11:00,2012-12-13 11:00,2012-12-09 11:00,2012-12-13 11:00,2012-12-09 11:00,2012-12-13 11:00,2013-01-24 13:00,2013-01-28 10:00,,PT_Normal,,,,,KoxsPwgUZ0ifIWqgvnsHBA,BogY/79i3k2MF+2YBtnl6Q,,,N,0,0,,,2013-11-05 11:09,2013-11-05 11:09,admin,admin,
467,102184,4512,26169,6590,0,N,N,N,CP_Drtn,TT_Task,DT_FixedDUR2,TK_NotStart,JF721.88,Prepare Shell Course # 2 for Erection,6951,432,0,32,0,200,200,32,20,0,20,,,,2013-01-06 07:00,2013-01-09 09:00,,2012-11-20 10:00,2012-11-23 14:30,2012-11-20 10:00,2012-11-23 14:30,2012-11-20 10:00,2012-11-23 14:30,2013-01-06 07:00,2013-01-09 09:00,,PT_Normal,,,,,jDMUoHkZwE+GqJZZDGwDAw,,,,N,0,0,,,2013-11-05 11:09,2013-11-05 11:09,admin,admin,
468,102185,4512,26169,6590,0,N,N,N,CP_Drtn,TT_Task,DT_FixedDUR2,TK_NotStart,JF721.89,Erect & Tack Shell Course # 2,6951,432,0,40,0,500,500,40,160,0,160,,,,2013-01-09 09:00,2013-01-13 14:00,,2012-11-24 07:00,2012-11-27 17:00,2012-11-24 07:00,2012-11-27 17:00,2012-11-24 07:00,2012-11-27 17:00,2013-01-09 09:00,2013-01-13 14:00,,PT_Normal,,,,,RYZ5irtojUeBZ2yC/co7ww,,,,N,0,0,,,2013-11-05 11:09,2013-11-05 11:09,admin,admin,
469,102186,4512,26169,6590,0,N,N,N,CP_Drtn,TT_Task,DT_FixedDUR2,TK_NotStart,JF721.90,Weld Outer Vertical Seam,,432,0,48,0,540,540,48,240,0,240,,,,2013-01-10 07:00,2013-01-15 10:00,,2012-11-24 15:00,2012-11-29 13:00,2012-11-24 15:00,2012-11-29 13:00,2012-11-24 15:00,2012-11-29 13:00,2013-01-10 07:00,2013-01-15 10:00,,PT_Normal,,,,,lAMGTeGtHE2RN2J/6Ue1uQ,,,,N,0,0,,,2013-11-05 11:09,2013-11-05 11:09,admin,admin,
470,102187,4512,26169,6590,0,N,N,N,CP_Drtn,TT_Task,DT_FixedDUR2,TK_NotStart,JF721.91,Backgouge & NDT Inside Vertical Seam,6967,432,0,40,0,240,240,40,20,0,20,,,,2013-01-10 15:00,2013-01-15 10:00,,2012-11-25 13:00,2012-11-29 13:00,2012-11-25 13:00,2012-11-29 13:00,2012-11-25 13:00,2012-11-29 13:00,2013-01-10 15:00,2013-01-15 10:00,,PT_Normal,,,,,QIBed9K9nUSZg1C3u/0iGQ,,,,N,0,0,,,2013-11-05 11:09,2013-11-05 11:09,admin,admin,
471,102188,4512,26169,6590,0,N,N,N,CP_Drtn,TT_Task,DT_FixedDUR2,TK_NotStart,JF721.92,Weld Inside Vertical Seam,6967,432,0,40,0,500,500,40,240,0,240,,,,2013-01-12 08:00,2013-01-16 08:00,,2012-11-26 11:00,2012-11-30 13:30,2012-11-26 11:00,2012-11-30 13:30,2012-11-26 11:00,2012-11-30 13:30,2013-01-12 08:00,2013-01-16 08:00,,PT_Normal,,,,,me/8Ulf0D0qCc7QuohDGyA,,,,N,0,0,,,2013-11-05 11:09,2013-11-05 11:09,admin,admin,
472,102189,4512,26169,6590,0,N,N,N,CP_Drtn,TT_Task,DT_FixedDUR2,TK_NotStart,JF721.93,"""""Fit & Tack Horizontal Seam between Shell Course # 1 & 2""""",6942,432,0,40,0,320,320,40,140,0,140,,,,2013-01-12 16:00,2013-01-16 16:00,,2012-11-27 09:00,2012-12-01 14:00,2012-11-27 09:00,2012-12-01 14:00,2012-11-27 09:00,2012-12-01 14:00,2013-01-12 16:00,2013-01-16 16:00,,PT_Normal,,,,,HhepJ4QMJUucgLI2ZY292w,,,,N,0,0,,,2013-11-05 11:09,2013-11-05 11:09,admin,admin,
473,102190,4512,26169,6590,0,N,N,N,CP_Drtn,TT_Task,DT_FixedDUR2,TK_NotStart,JF721.94,"""""Weld Outer Horizontal Seam between Shell Course # 1 & 2""""",6942,432,0,56,0,800,800,56,520,0,520,,,,2013-01-13 14:00,2013-01-19 15:00,,2012-11-28 07:00,2012-12-04 08:00,2012-11-28 07:00,2012-12-04 08:00,2012-11-28 07:00,2012-12-04 08:00,2013-01-13 14:00,2013-01-19 15:00,,PT_Normal,,,,,lkLFEMXTXUKPxflPQyXARw,,,,N,0,0,,,2013-11-05 11:09,2013-11-05 11:09,admin,admin,
474,102191,4512,26169,6590,0,N,N,N,CP_Drtn,TT_Task,DT_FixedDUR2,TK_NotStart,JF721.95,"""""Backgouge & NDT Inside Horizontal Seam between Shell Course# 1 & 2""""",6915,432,0,40,0,220,220,40,60,0,60,,,,2013-01-14 12:00,2013-01-18 14:30,,2012-11-28 15:00,2012-12-03 10:00,2012-11-28 15:00,2012-12-03 10:00,2012-11-28 15:00,2012-12-03 10:00,2013-01-14 12:00,2013-01-18 14:30,,PT_Normal,,,,,kH/lAM3AtkWhT4mfVd58nw,,,,N,0,0,,,2013-11-05 11:09,2013-11-05 11:09,admin,admin,
475,102192,4512,26169,6590,0,N,N,N,CP_Drtn,TT_Task,DT_FixedDUR2,TK_NotStart,JF721.96,"Weld Inner Horizontal Seam between Shell Course # 1 & 2""""",6915,432,0,40,0,380,380,40,240,0,240,,,,2013-01-15 10:00,2013-01-19 15:00,,2012-11-29 13:00,2012-12-04 08:00,2012-11-29 13:00,2012-12-04 08:00,2012-11-29 13:00,2012-12-04 08:00,2013-01-15 10:00,2013-01-19 15:00,,PT_Normal,,,,,9cF45kxRFk2EnJ8lJ65Rtw,,,,N,0,0,,,2013-11-05 11:09,2013-11-05 11:09,admin,admin,
476,102193,4512,26170,6590,0,N,N,N,CP_Drtn,TT_Task,DT_FixedDUR2,TK_NotStart,JF721.70,Layout/Stake-out,6942,560,0,24,0,320,320,24,60,0,60,,,,2012-09-29 08:00,2012-10-01 12:00,,2012-07-27 10:30,2012-07-29 17:00,2012-07-27 10:30,2012-07-29 17:00,2012-07-27 10:30,2012-07-29 17:00,2012-09-29 08:00,2012-10-01 12:00,,PT_Normal,,,,,4XSHoqoD9ESoScRKLAlM8Q,,,,N,0,0,,,2013-11-05 11:09,2013-11-05 11:09,admin,admin,
477,102194,4512,26170,6590,0,N,N,N,CP_Drtn,TT_Task,DT_FixedDUR2,TK_NotStart,JF721.71,Excavation,6942,560,0,88,0,1650,1650,88,500,0,500,,,,2012-09-29 16:00,2012-10-09 09:00,,2012-07-28 11:00,2012-08-06 14:00,2012-07-28 11:00,2012-08-06 14:00,2012-07-28 11:00,2012-08-06 14:00,2012-09-29 16:00,2012-10-09 09:00,,PT_Normal,,,,,lKkUR0uQnEiKrFlTeRyUoA,,,,N,0,0,,,2013-11-05 11:09,2013-11-05 11:09,admin,admin,
478,102195,4512,26170,6590,0,N,N,N,CP_Drtn,TT_Task,DT_FixedDUR2,TK_NotStart,JF721.72,SteelWorks/Formworks,6980,560,0,64,0,1330,1330,64,280,0,280,,,,2012-10-09 09:00,2012-10-16 08:00,,2012-08-06 14:00,2012-08-13 13:00,2012-08-06 14:00,2012-08-13 13:00,2012-08-06 14:00,2012-08-13 13:00,2012-10-09 09:00,2012-10-16 08:00,,PT_Normal,,,,,xVEDaMrwhUGxK9K6DqJ8vw,,,,N,0,0,,,2013-11-05 11:09,2013-11-05 11:09,admin,admin,
479,102196,4512,26170,6590,0,N,N,N,CP_Drtn,TT_Task,DT_FixedDUR2,TK_NotStart,JF721.73,Soil Compaction,6965,560,0,48,0,730,730,48,250,0,250,,,,2012-10-16 08:00,2012-10-21 11:00,,2012-08-13 13:00,2012-08-18 16:00,2012-08-13 13:00,2012-08-18 16:00,2012-08-13 13:00,2012-08-18 16:00,2012-10-16 08:00,2012-10-21 11:00,,PT_Normal,,,,,XoqhXM9kB025ZKqzKhW7mQ,,,,N,0,0,,,2013-11-05 11:09,2013-11-05 11:09,admin,admin,
480,102197,4512,26212,6590,0,N,N,N,CP_Drtn,TT_Task,DT_FixedDUR2,TK_NotStart,JF721.74,Concrete Pouring,6952,560,0,16,0,160,160,16,38,0,38,,,,2012-10-21 11:00,2012-10-22 17:00,,2012-08-18 16:00,2012-08-23 12:00,2012-08-18 16:00,2012-08-23 12:00,2012-08-18 16:00,2012-08-23 12:00,2012-10-21 11:00,2012-10-22 17:00,,PT_Normal,,,,,7aQgAMWzIkGV4V+8TZmv9A,,,,N,0,0,,,2013-11-05 11:09,2013-11-05 11:09,admin,admin,
481,102198,4512,26212,6590,0,N,N,N,CP_Drtn,TT_Task,DT_FixedDUR2,TK_NotStart,JF721.75,Concrete Curing,6965,560,0,24,0,330,330,24,80,0,80,,,,2012-10-23 07:00,2012-10-25 11:00,,2012-08-23 12:00,2012-08-26 11:00,2012-08-23 12:00,2012-08-26 11:00,2012-08-23 12:00,2012-08-26 11:00,2012-10-23 07:00,2012-10-25 11:00,,PT_Normal,,,,,Y5ajYhGXQUqBh9/ROZtpHg,,,,N,0,0,,,2013-11-05 11:09,2013-11-05 11:09,admin,admin,
482,102199,4512,26212,6590,0,N,N,N,CP_Drtn,TT_Task,DT_FixedDUR2,TK_NotStart,JF721.76,Removal of Formworks,6952,560,0,32,0,480,480,32,120,0,120,,,,2012-10-25 11:00,2012-10-30 13:00,,2012-08-26 11:00,2012-08-29 13:00,2012-08-26 11:00,2012-08-29 13:00,2012-08-26 11:00,2012-08-29 13:00,2012-10-25 11:00,2012-10-30 13:00,,PT_Normal,,,,,30icY7YsuUmdEXuFSsSufw,,,,N,0,0,,,2013-11-05 11:09,2013-11-05 11:09,admin,admin,
483,102200,4512,26212,6590,0,N,N,N,CP_Drtn,TT_Task,DT_FixedDUR2,TK_NotStart,JF721.77,Backfilling,6965,560,0,32,0,360,360,32,150,0,150,,,,2012-10-30 13:00,2012-11-03 10:00,,2012-08-29 13:00,2012-09-02 10:00,2012-08-29 13:00,2012-09-02 10:00,2012-08-29 13:00,2012-09-02 10:00,2012-10-30 13:00,2012-11-03 10:00,,PT_Normal,,,,,1GGEgtI5UU6JtSlQbbU6DQ,,,,N,0,0,,,2013-11-05 11:09,2013-11-05 11:09,admin,admin,
484,102201,4512,26172,6590,0,N,N,N,CP_Drtn,TT_Task,DT_FixedDUR2,TK_NotStart,JF721.106,Prepare Shell Course # 4 for Erection,6942,432,0,32,0,110,110,32,30,0,30,,,,2013-01-28 10:00,2013-01-31 12:00,,2012-12-13 11:00,2012-12-17 08:00,2012-12-13 11:00,2012-12-17 08:00,2012-12-13 11:00,2012-12-17 08:00,2013-01-28 10:00,2013-01-31 12:00,,PT_Normal,,,,,QVvYlZiGQkKf+LnrlYNMuA,aa2f8K/jKk+B4WqT5nBHdg,,,N,0,0,,,2013-11-05 11:09,2013-11-05 11:09,admin,admin,
485,102202,4512,26172,6590,0,N,N,N,CP_Drtn,TT_Task,DT_FixedDUR2,TK_NotStart,JF721.107,Erect & Tack Shell Course # 4,6965,432,0,40,0,260,260,40,120,0,120,,,,2013-01-31 12:00,2013-02-04 17:00,,2012-12-17 08:00,2012-12-21 10:30,2012-12-17 08:00,2012-12-21 10:30,2012-12-17 08:00,2012-12-21 10:30,2013-01-31 12:00,2013-02-04 17:00,,PT_Normal,,,,,kiN5/fC2pk6PVFQfM2XPZQ,kdyi/RTY7E2TnBhVkMDvOA,,,N,0,0,,,2013-11-05 11:09,2013-11-05 11:09,admin,admin,
486,102203,4512,26172,6590,0,N,N,N,CP_Drtn,TT_Task,DT_FixedDUR2,TK_NotStart,JF721.108,Weld Outer Vertical Seam,6942,432,0,48,0,480,480,48,330,0,330,,,,2013-02-01 12:30,2013-02-06 13:00,,2012-12-17 16:00,2012-12-23 09:00,2012-12-17 16:00,2012-12-23 09:00,2012-12-17 16:00,2012-12-23 09:00,2013-02-01 12:30,2013-02-06 13:00,,PT_Normal,,,,,KS2csovBPkSQ307lBrpW/Q,86Bvz8VvCUucVvkCnUtGgg,,,N,0,0,,,2013-11-05 11:09,2013-11-05 11:09,admin,admin,
487,102204,4512,26172,6590,0,N,N,N,CP_Drtn,TT_Task,DT_FixedDUR2,TK_NotStart,JF721.109,Backgouge & NDT Inside Vertical Seam,6942,432,0,40,0,160,160,40,40,0,40,,,,2013-02-02 13:00,2013-02-06 13:00,,2012-12-18 14:00,2012-12-23 09:00,2012-12-18 14:00,2012-12-23 09:00,2012-12-18 14:00,2012-12-23 09:00,2013-02-02 13:00,2013-02-06 13:00,,PT_Normal,,,,,0/rBeqN6Xkeg58VuUekxXg,HGM1vwCLFEqi4E2FBKOOXQ,,,N,0,0,,,2013-11-05 11:09,2013-11-05 11:09,admin,admin,
488,102205,4512,26172,6590,0,N,N,N,CP_Drtn,TT_Task,DT_FixedDUR2,TK_NotStart,JF721.110,Weld Inside Vertical Seam,6935,432,0,40,0,320,320,40,220,0,220,,,,2013-02-03 11:00,2013-02-07 11:00,,2012-12-19 12:00,2012-12-23 17:00,2012-12-19 12:00,2012-12-23 17:00,2012-12-19 12:00,2012-12-23 17:00,2013-02-03 11:00,2013-02-07 11:00,,PT_Normal,,,,,/fuNY9RTEkupg7BwuF3sJQ,LHI8cryx3Uy+wfN0GANeXg,,,N,0,0,,,2013-11-05 11:09,2013-11-05 11:09,admin,admin,
489,102206,4512,26172,6590,0,N,N,N,CP_Drtn,TT_Task,DT_FixedDUR2,TK_NotStart,JF721.111,"""""Fit & Tack Horizontal Seam between Shell Course # 3 & 4""""",6942,432,0,40,0,240,240,40,100,0,100,,,,2013-02-04 09:00,2013-02-08 11:30,,2012-12-20 10:00,2012-12-24 15:00,2012-12-20 10:00,2012-12-24 15:00,2012-12-20 10:00,2012-12-24 15:00,2013-02-04 09:00,2013-02-08 11:30,,PT_Normal,,,,,foHeN8jkuEqASISuxX0vdQ,x/t6JEwh8EWnJncbLfweow,,,N,0,0,,,2013-11-05 11:09,2013-11-05 11:09,admin,admin,
490,102207,4512,26172,6590,0,N,N,N,CP_Drtn,TT_Task,DT_FixedDUR2,TK_NotStart,JF721.112,Weld Outer Horizontal Seam between Shell Course # 3 & 4,6942,432,0,56,0,680,680,56,440,0,440,,,,2013-02-05 07:00,2013-02-11 08:00,,2012-12-21 10:30,2012-12-27 09:00,2012-12-21 10:30,2012-12-27 09:00,2012-12-21 10:30,2012-12-27 09:00,2013-02-05 07:00,2013-02-11 08:00,,PT_Normal,,,,,U2wdtbGtLk2OZnosdSWKGA,andCbcI3A0aC9hARQKwuqg,,,N,0,0,,,2013-11-05 11:09,2013-11-05 11:09,admin,admin,
491,102208,4512,26172,6590,0,N,N,N,CP_Drtn,TT_Task,DT_FixedDUR2,TK_NotStart,JF721.113,"""""Backgouge & NDT Inside Horizontal Seam between Shell Course# 3 & 4""""",6942,432,0,40,0,180,180,40,40,0,40,,,,2013-02-05 15:00,2013-02-10 10:00,,2012-12-22 11:00,2012-12-26 11:00,2012-12-22 11:00,2012-12-26 11:00,2012-12-22 11:00,2012-12-26 11:00,2013-02-05 15:00,2013-02-10 10:00,,PT_Normal,,,,,kB3aR4O9zkueuSLlaZ29TQ,SS/dxiHsYEqPCSm6VbYpYw,,,N,0,0,,,2013-11-05 11:09,2013-11-05 11:09,admin,admin,
492,102209,4512,26172,6590,0,N,N,N,CP_Drtn,TT_Task,DT_FixedDUR2,TK_NotStart,JF721.114,"Weld Inner Horizontal Seam between Shell Course # 3 & 4""""",6942,432,0,40,0,360,360,40,220,0,220,,,,2013-02-06 13:00,2013-02-11 08:00,,2012-12-23 09:00,2012-12-27 09:00,2012-12-23 09:00,2012-12-27 09:00,2012-12-23 09:00,2012-12-27 09:00,2013-02-06 13:00,2013-02-11 08:00,,PT_Normal,,,,,wNLYb2OVTkWOD4d5fJzPoQ,BogY/79i3k2MF+2YBtnl6Q,,,N,0,0,,,2013-11-05 11:09,2013-11-05 11:09,admin,admin,
493,102210,4512,26172,6590,0,N,N,N,CP_Drtn,TT_Task,DT_FixedDUR2,TK_NotStart,JF721.115,"Fit, Weld Shell Course # 1 Annular Plate & Oil Test",6964,624,192,72,0,1500,1500,72,660,0,660,,,,2013-01-28 10:00,2013-02-04 17:00,,2012-11-22 14:00,2012-11-30 13:30,2012-11-22 14:00,2012-11-30 13:30,2012-11-22 14:00,2012-11-30 13:30,2013-01-28 10:00,2013-02-04 17:00,,PT_Normal,,,,,INtgDIGJf0CP9ZKpnyYNsQ,,,,N,0,0,,,2013-11-05 11:09,2013-11-05 11:09,admin,admin,
494,102211,4512,26173,6590,0,N,N,N,CP_Drtn,TT_Task,DT_FixedDUR2,TK_NotStart,JF721.154,FInal Inspection & Hand over to client,6915,432,0,40,0,320,320,40,80,0,80,,,,2013-08-09 09:30,2013-08-13 12:00,,2013-06-23 15:00,2013-06-27 15:00,2013-06-23 15:00,2013-06-27 15:00,2013-06-23 15:00,2013-06-27 15:00,2013-08-09 09:30,2013-08-13 12:00,,PT_Normal,,,,,I4PX9iPU5EC3M0zmXnfU4A,,,,N,0,0,,,2013-11-05 11:09,2013-11-05 11:09,admin,admin,
495,102212,4512,26174,6590,0,N,N,N,CP_Drtn,TT_Task,DT_FixedDUR2,TK_NotStart,JF721.134,Erect  Scafolding Outside Tank,6942,432,0,72,0,1200,1200,72,160,0,160,,,,2013-05-07 10:00,2013-05-14 17:00,,2013-03-21 13:00,2013-03-29 12:30,2013-03-21 13:00,2013-03-29 12:30,2013-03-21 13:00,2013-03-29 12:30,2013-05-07 10:00,2013-05-14 17:00,,PT_Normal,,,,,zV9tCYAOvESR8xiwqbhyog,,,,N,0,0,,,2013-11-05 11:09,2013-11-05 11:09,admin,admin,
496,102213,4512,26174,6590,0,N,N,N,CP_Drtn,TT_Task,DT_FixedDUR2,TK_NotStart,JF721.135,External Shell Blast & Prime,6950,432,0,40,0,560,560,40,80,0,80,,,,2013-05-15 07:00,2013-05-19 12:00,,2013-03-29 12:30,2013-04-02 15:00,2013-03-29 12:30,2013-04-02 15:00,2013-03-29 12:30,2013-04-02 15:00,2013-05-15 07:00,2013-05-19 12:00,,PT_Normal,,,,,bn0yVAgg3ku5KItLZdJJmg,,,,N,0,0,,,2013-11-05 11:09,2013-11-05 11:09,admin,admin,
497,102214,4512,26174,6590,0,N,N,N,CP_Drtn,TT_Task,DT_FixedDUR2,TK_NotStart,JF721.136,External Shell Secondary & Final Coat,6965,432,0,40,0,560,560,40,80,0,80,,,,2013-05-15 15:00,2013-05-20 10:00,,2013-03-30 13:00,2013-04-03 13:00,2013-03-30 13:00,2013-04-03 13:00,2013-03-30 13:00,2013-04-03 13:00,2013-05-15 15:00,2013-05-20 10:00,,PT_Normal,,,,,Evusm+kl/UqdnCBeZG8Q4g,,,,N,0,0,,,2013-11-05 11:09,2013-11-05 11:09,admin,admin,
498,102215,4512,26174,6590,0,N,N,N,CP_Drtn,TT_Task,DT_FixedDUR2,TK_NotStart,JF721.137,External Shell Paint Inspection,6935,432,0,16,0,100,100,16,20,0,20,,,,2013-05-20 10:00,2013-05-21 16:00,,2013-04-03 13:00,2013-04-05 11:30,2013-04-03 13:00,2013-04-05 11:30,2013-04-03 13:00,2013-04-05 11:30,2013-05-20 10:00,2013-05-21 16:00,,PT_Normal,,,,,GcEM2d41hEe6+wE2DExE5w,,,,N,0,0,,,2013-11-05 11:09,2013-11-05 11:09,admin,admin,
499,102216,4512,26174,6590,0,N,N,N,CP_Drtn,TT_Task,DT_FixedDUR2,TK_NotStart,JF721.138,Dismantle External Scaffolding,6957,432,0,24,0,420,420,24,40,0,40,,,,2013-05-21 16:00,2013-05-24 12:30,,2013-04-05 11:30,2013-04-08 08:00,2013-04-05 11:30,2013-04-08 08:00,2013-04-05 11:30,2013-04-08 08:00,2013-05-21 16:00,2013-05-24 12:30,,PT_Normal,,,,,AsxgCmvRgEmX8pYgFBOXKA,,,,N,0,0,,,2013-11-05 11:09,2013-11-05 11:09,admin,admin,
500,102217,4512,26175,6590,0,N,N,N,CP_Drtn,TT_FinMile,DT_FixedDrtn,TK_NotStart,1.7,Complete MOBILIZATION of camp with Catering and accommodation facilities,,560,0,0,0,0,0,0,0,0,0,,,,2012-09-29 08:00,2012-09-29 08:00,,2012-07-27 10:30,2012-07-27 10:30,2012-07-27 10:30,2012-07-27 10:30,2012-07-27 10:30,2012-07-27 10:30,2012-09-29 08:00,2012-09-29 08:00,,PT_Normal,,,,,jJpiG1dtbEuOWkLiC/9ENA,,,,N,0,0,,,2013-11-05 11:09,2013-11-05 11:09,admin,admin,
501,102218,4512,26176,6590,0,N,N,N,CP_Drtn,TT_FinMile,DT_FixedDrtn,TK_NotStart,1.9,"Complete construction of Civil/Structural Work , including excavation, backfill",,560,128,0,0,0,0,0,0,0,0,,,,2012-11-03 10:00,2012-11-03 10:00,,2012-09-02 10:00,2012-09-02 10:00,2012-09-02 10:00,2012-09-02 10:00,2012-09-02 10:00,2012-09-02 10:00,2012-11-03 10:00,2012-11-03 10:00,,PT_Normal,,,,,K1dfV/wbckG3PBW3GLshqA,,,,N,0,0,,,2013-11-05 11:09,2013-11-05 11:09,admin,admin,
502,102219,4512,26177,6590,0,N,N,N,CP_Drtn,TT_FinMile,DT_FixedDrtn,TK_NotStart,2.A,Mechanical COmpleteing (MCC),,432,0,0,0,0,0,0,0,0,0,,,,2013-04-04 11:00,2013-04-04 11:00,,2013-02-17 09:00,2013-02-17 09:00,2013-02-17 09:00,2013-02-17 09:00,2013-02-17 09:00,2013-02-17 09:00,2013-04-04 11:00,2013-04-04 11:00,,PT_Normal,,,,,cv6sHvMDzE2kGhAVxjIybg,,,,N,0,0,,,2013-11-05 11:09,2013-11-05 11:09,admin,admin,
503,102220,4512,26178,6590,0,N,N,N,CP_Drtn,TT_FinMile,DT_FixedDrtn,TK_NotStart,1.10,Complete Installation of Task Lighting for the tanks,,432,0,0,0,0,0,0,0,0,0,,,,2013-07-25 11:00,2013-07-25 11:00,,2013-06-09 09:00,2013-06-09 09:00,2013-06-09 09:00,2013-06-09 09:00,2013-06-09 09:00,2013-06-09 09:00,2013-07-25 11:00,2013-07-25 11:00,,PT_Normal,,,,,FA01Rm9R5kqojd8KqDXEBw,,,,N,0,0,,,2013-11-05 11:09,2013-11-05 11:09,admin,admin,
504,102221,4512,26179,6590,0,N,N,N,CP_Drtn,TT_FinMile,DT_FixedDrtn,TK_NotStart,3.A,Third Party Testing,,432,0,0,0,0,0,0,0,0,0,,,,2013-08-08 17:00,2013-08-08 17:00,,2013-06-23 15:00,2013-06-23 15:00,2013-06-23 15:00,2013-06-23 15:00,2013-06-23 15:00,2013-06-23 15:00,2013-08-08 17:00,2013-08-08 17:00,,PT_Normal,,,,,DClD8rxonU+hRsUADtNSkQ,,,,N,0,0,,,2013-11-05 11:09,2013-11-05 11:09,admin,admin,
505,102222,4512,26180,6590,0,N,N,N,CP_Drtn,TT_FinMile,DT_FixedDrtn,TK_NotStart,4.A,Final Testing,,432,0,0,0,0,0,0,0,0,0,,,,2013-05-21 16:00,2013-05-21 16:00,,2013-04-05 11:30,2013-04-05 11:30,2013-04-05 11:30,2013-04-05 11:30,2013-04-05 11:30,2013-04-05 11:30,2013-05-21 16:00,2013-05-21 16:00,,PT_Normal,,,,,6Z86U9hU5UWUOH64oVIiWA,,,,N,0,0,,,2013-11-05 11:09,2013-11-05 11:09,admin,admin,
506,102223,4512,26181,6590,0,N,N,N,CP_Drtn,TT_FinMile,DT_FixedDrtn,TK_NotStart,6.A,Project Completion,,432,80,0,0,0,0,0,0,0,0,,,,2013-08-13 12:00,2013-08-13 12:00,,2013-06-27 15:00,2013-06-27 15:00,2013-06-27 15:00,2013-06-27 15:00,2013-06-27 15:00,2013-06-27 15:00,2013-08-13 12:00,2013-08-13 12:00,,PT_Normal,,,,,hE66XNfFKEezTLDPqjcCtw,,,,N,0,0,,,2013-11-05 11:09,2013-11-05 11:09,admin,admin,
507,102224,4512,26185,6590,0,N,N,N,CP_Drtn,TT_Task,DT_FixedDrtn,TK_NotStart,JF721.463,Soil Investigation Works,6911,0,0,16,0,20,20,16,0,0,0,,,,2012-06-30 07:00,2012-07-01 13:00,,2012-06-30 07:00,2012-07-01 13:00,2012-06-30 07:00,2012-07-01 13:00,2012-06-30 07:00,2012-07-01 13:00,2012-06-30 07:00,2012-07-01 13:00,,PT_Normal,,,,,dCenI07ckku7Cc44VIE2Nw,tilj/BgtPUyImT3a3vjOZA,,,Y,0,0,,,2013-11-05 11:09,2013-11-05 11:09,admin,admin,
508,102225,4512,26186,6590,0,N,N,N,CP_Drtn,TT_Task,DT_FixedDUR2,TK_NotStart,JF721.469,60% Submittal (Tank & Foundation Drawings),6917,40,0,8,0,24,24,8,0,0,0,,,,2012-07-22 10:00,2012-07-23 08:00,,2012-07-17 15:00,2012-07-18 13:00,2012-07-17 15:00,2012-07-18 13:00,2012-07-17 15:00,2012-07-18 13:00,2012-07-22 10:00,2012-07-23 08:00,,PT_Normal,,,,,fqyiJ0tiFU+OZ2+UZFzLZQ,pa4t8JX3xUOmdD13f/QgrQ,,,N,0,0,,,2013-11-05 11:09,2013-11-05 11:09,admin,admin,
509,102226,4512,26186,6590,0,N,N,N,CP_Drtn,TT_Task,DT_FixedDUR2,TK_NotStart,JF721.470,60% Comments Incooperation (Tanks & Foundation Drawings),6912,40,0,40,0,120,120,40,0,0,0,,,,2012-07-23 08:00,2012-07-27 10:30,,2012-07-18 13:00,2012-07-23 08:00,2012-07-18 13:00,2012-07-23 08:00,2012-07-18 13:00,2012-07-23 08:00,2012-07-23 08:00,2012-07-27 10:30,,PT_Normal,,,,,/ptrTO2rw02nVxjl60TYtQ,c7cKieqgX0eZB6jCi4CYQg,,,N,0,0,,,2013-11-05 11:09,2013-11-05 11:09,admin,admin,
510,102227,4512,26186,6590,0,N,N,N,CP_Drtn,TT_Task,DT_FixedDUR2,TK_NotStart,JF721.471,90% Submittal (Tanks & Foundation Drawings),6912,40,0,8,0,24,24,8,0,0,0,,,,2012-07-27 10:30,2012-07-28 11:00,,2012-07-23 08:00,2012-07-23 16:00,2012-07-23 08:00,2012-07-23 16:00,2012-07-23 08:00,2012-07-23 16:00,2012-07-27 10:30,2012-07-28 11:00,,PT_Normal,,,,,wtcHtL2U3E+21iQ1jFCmNQ,Oq91g8uAHkud4KjpRIm7Cw,,,N,0,0,,,2013-11-05 11:09,2013-11-05 11:09,admin,admin,
511,102228,4512,26186,6590,0,N,N,N,CP_Drtn,TT_Task,DT_FixedDUR2,TK_NotStart,JF721.472,90% Comments Incooperation (Tanks & Foundation Drawings),6913,40,0,16,0,48,48,16,0,0,0,,,,2012-07-28 11:00,2012-07-29 17:00,,2012-07-23 16:00,2012-07-25 12:00,2012-07-23 16:00,2012-07-25 12:00,2012-07-23 16:00,2012-07-25 12:00,2012-07-28 11:00,2012-07-29 17:00,,PT_Normal,,,,,C5lO4mPsHk2wzFeJPuCPrg,NLfQYfPgL0in5ot1mowPmA,,,N,0,0,,,2013-11-05 11:09,2013-11-05 11:09,admin,admin,
512,102229,4512,26186,6590,0,N,N,N,CP_Drtn,TT_Task,DT_FixedDUR2,TK_NotStart,JF721.473,IFC,6912,40,0,8,0,24,24,8,0,0,0,,,,2012-07-30 07:00,2012-07-30 15:00,,2012-07-25 12:00,2012-07-26 10:00,2012-07-25 12:00,2012-07-26 10:00,2012-07-25 12:00,2012-07-26 10:00,2012-07-30 07:00,2012-07-30 15:00,,PT_Normal,,,,,keEHFOidN0qq2tZTA3HMgA,YB8e0idN10af30ffswm68g,,,N,0,0,,,2013-11-05 11:09,2013-11-05 11:09,admin,admin,
513,102230,4512,26187,6590,0,N,N,N,CP_Drtn,TT_Task,DT_FixedDUR2,TK_NotStart,JF721.464,60% Submittal,6917,40,0,8,0,8,8,8,0,0,0,,,,2012-07-05 13:00,2012-07-06 13:30,,2012-07-01 13:00,2012-07-02 11:00,2012-07-01 13:00,2012-07-02 11:00,2012-07-01 13:00,2012-07-02 11:00,2012-07-05 13:00,2012-07-06 13:30,,PT_Normal,,,,,w2hzmTK6vUyjnCShLPDSfg,kuI23ko2K06nGh7pYlYbPw,,,N,0,0,,,2013-11-05 11:09,2013-11-05 11:09,admin,admin,
514,102231,4512,26187,6590,0,N,N,N,CP_Drtn,TT_Task,DT_FixedDUR2,TK_NotStart,JF721.465,60% Comments Incooperation,6917,40,0,56,0,56,56,56,0,0,0,,,,2012-07-06 13:30,2012-07-12 12:00,,2012-07-02 11:00,2012-07-08 12:00,2012-07-02 11:00,2012-07-08 12:00,2012-07-02 11:00,2012-07-08 12:00,2012-07-06 13:30,2012-07-12 12:00,,PT_Normal,,,,,1eBcGne/W0+gEt61fw0irA,0U9JnQMiOk6YIsiiWu85PQ,,,N,0,0,,,2013-11-05 11:09,2013-11-05 11:09,admin,admin,
515,102232,4512,26187,6590,0,N,N,N,CP_Drtn,TT_Task,DT_FixedDUR2,TK_NotStart,JF721.466,90% Submittal,6917,40,0,8,0,8,8,8,0,0,0,,,,2012-07-12 12:00,2012-07-13 12:30,,2012-07-08 12:00,2012-07-09 10:00,2012-07-08 12:00,2012-07-09 10:00,2012-07-08 12:00,2012-07-09 10:00,2012-07-12 12:00,2012-07-13 12:30,,PT_Normal,,,,,tWwP8pzJiU2uR/Kx8tvKHw,C7hTBAQqiEyYNqvlOGroXg,,,N,0,0,,,2013-11-05 11:09,2013-11-05 11:09,admin,admin,
516,102233,4512,26187,6590,0,N,N,N,CP_Drtn,TT_Task,DT_FixedDUR2,TK_NotStart,JF721.467,90% Comments Incooperation,6917,40,0,56,0,56,56,56,0,0,0,,,,2012-07-13 12:30,2012-07-19 11:00,,2012-07-09 10:00,2012-07-15 11:00,2012-07-09 10:00,2012-07-15 11:00,2012-07-09 10:00,2012-07-15 11:00,2012-07-13 12:30,2012-07-19 11:00,,PT_Normal,,,,,9Hii8KxNck23DBE3rxgBWA,UIcoV7UUWk2wV+KfS2SSeQ,,,N,0,0,,,2013-11-05 11:09,2013-11-05 11:09,admin,admin,
517,102234,4512,26187,6590,0,N,N,N,CP_Drtn,TT_Task,DT_FixedDUR2,TK_NotStart,JF721.468,IFC,6917,40,0,24,0,24,24,24,0,0,0,,,,2012-07-19 11:00,2012-07-22 10:00,,2012-07-15 11:00,2012-07-17 15:00,2012-07-15 11:00,2012-07-17 15:00,2012-07-15 11:00,2012-07-17 15:00,2012-07-19 11:00,2012-07-22 10:00,,PT_Normal,,,,,/xtlgvpcVU2HTM+bjpNNVA,fsVRMhL8s0SJGjy9GoYmEA,,,N,0,0,,,2013-11-05 11:09,2013-11-05 11:09,admin,admin,
518,102235,4512,26188,6590,0,N,N,N,CP_Drtn,TT_FinMile,DT_FixedDrtn,TK_NotStart,4.1,Complete survey and Geotechnical Investigation for Ad-Duaihi Storage Facility.,,40,0,0,0,0,0,0,0,0,0,,,,2012-07-05 13:00,2012-07-05 13:00,,2012-07-01 13:00,2012-07-01 13:00,2012-07-01 13:00,2012-07-01 13:00,2012-07-01 13:00,2012-07-01 13:00,2012-07-05 13:00,2012-07-05 13:00,,PT_Normal,,,,,MXark2a8mEiZFKNHz3wSbQ,,,,N,0,0,,,2013-11-05 11:09,2013-11-05 11:09,admin,admin,
519,102236,4512,26189,6590,0,N,N,N,CP_Drtn,TT_FinMile,DT_FixedDrtn,TK_NotStart,4.2,Complete Engineering design and Calculations,,40,0,0,0,0,0,0,0,0,0,,,,2012-07-22 10:00,2012-07-22 10:00,,2012-07-17 15:00,2012-07-17 15:00,2012-07-17 15:00,2012-07-17 15:00,2012-07-17 15:00,2012-07-17 15:00,2012-07-22 10:00,2012-07-22 10:00,,PT_Normal,,,,,77OH99YxpEOvO1zMkwPE7g,,,,N,0,0,,,2013-11-05 11:09,2013-11-05 11:09,admin,admin,
520,102237,4512,26231,6590,0,N,N,N,CP_Drtn,TT_FinMile,DT_FixedDrtn,TK_NotStart,4.3,Complete Fabrication and GA Drawing with Bill of Quantities,,40,0,0,0,0,0,0,0,0,0,,,,2012-07-30 15:00,2012-07-30 15:00,,2012-07-26 10:00,2012-07-26 10:00,2012-07-26 10:00,2012-07-26 10:00,2012-07-26 10:00,2012-07-26 10:00,2012-07-30 15:00,2012-07-30 15:00,,PT_Normal,,,,,cT7AKl8IykSyU8LKl3B5Og,,,,N,0,0,,,2013-11-05 11:09,2013-11-05 11:09,admin,admin,
521,102238,4512,26192,6590,0,N,N,N,CP_Drtn,TT_Task,DT_FixedDUR2,TK_NotStart,JF721.474,PO Issued,,40,0,48,0,0,0,48,0,0,0,,,,2012-07-30 15:00,2012-08-05 08:00,,2012-07-26 10:00,2012-07-31 13:00,2012-07-26 10:00,2012-07-31 13:00,2012-07-26 10:00,2012-07-31 13:00,2012-07-30 15:00,2012-08-05 08:00,,PT_Normal,,,,,loR0ZfLBc06+qgvjRe7UBg,zCk7aObfCUGOntxgxjFmMQ,,,N,0,0,,,2013-11-05 11:09,2013-11-05 11:09,admin,admin,
522,102239,4512,26192,6590,0,N,N,N,CP_Drtn,TT_Task,DT_FixedDUR2,TK_NotStart,JF721.475,Ma'aden Site Delievery,,40,0,408,0,0,0,408,0,0,0,,,,2012-08-05 08:00,2012-09-20 16:00,,2012-07-31 13:00,2012-09-16 16:00,2012-07-31 13:00,2012-09-16 16:00,2012-07-31 13:00,2012-09-16 16:00,2012-08-05 08:00,2012-09-20 16:00,,PT_Normal,,,,,3BO6vUBB70+pw/s66xwW6g,6oHrZtG370unhirho4VupA,,,N,0,0,,,2013-11-05 11:09,2013-11-05 11:09,admin,admin,
523,102240,4512,26193,6590,0,N,N,N,CP_Drtn,TT_Task,DT_FixedDUR2,TK_NotStart,JF721.476,Approval for Vendor Drawings & SPecifications,,288,0,16,0,0,0,16,0,0,0,,,,2012-08-28 07:00,2012-08-29 13:00,,2012-07-24 14:00,2012-07-26 10:00,2012-07-24 14:00,2012-07-26 10:00,2012-07-24 14:00,2012-07-26 10:00,2012-08-28 07:00,2012-08-29 13:00,,PT_Normal,,,,,HRlrkPaNUU6HaiykfvtSKA,6r11gtJdnUe/59WOKiaHmQ,,,N,0,0,,,2013-11-05 11:09,2013-11-05 11:09,admin,admin,
524,102241,4512,26193,6590,0,N,N,N,CP_Drtn,TT_Task,DT_FixedDUR2,TK_NotStart,JF721.477,PO Issued,,991.983333,0,224,0,0,0,224,0,0,0,,,,2012-11-14 16:59,2012-12-09 10:59,,2012-07-26 10:00,2012-08-22 14:00,2012-07-26 10:00,2012-08-22 14:00,2012-07-26 10:00,2012-08-22 14:00,2012-11-14 16:59,2012-12-09 10:59,,PT_Normal,,,,,ZI9/EKKnkUi0l7OVmVCXQg,NmLAcJcOhUaoeMu+fvzAow,,,N,0,0,,,2013-11-05 11:09,2013-11-05 11:09,admin,admin,
525,102242,4512,26193,6590,0,N,N,N,CP_Drtn,TT_Task,DT_FixedDUR2,TK_NotStart,JF721.478,CP System Delievered to Ma'aden Site & Installed,6964,40,0,112,0,2000,2000,112,800,0,800,,,,2013-06-23 15:00,2013-07-05 14:30,,2013-06-19 10:00,2013-07-01 12:00,2013-06-19 10:00,2013-07-01 12:00,2013-06-19 10:00,2013-07-01 12:00,2013-06-23 15:00,2013-07-05 14:30,,PT_Normal,,,,,SlD9JIIMRUirxTzVT+HM+g,+o+DyVVQ/kCd+4ON0641Rw,,,N,0,0,,,2013-11-05 11:09,2013-11-05 11:09,admin,admin,
526,102243,4512,26193,6590,0,N,N,N,CP_Drtn,TT_Task,DT_FixedDUR2,TK_NotStart,JF721.479,Ma'aden CP Inspection,6942,40,0,16,0,90,90,16,40,0,40,,,,2013-07-06 07:00,2013-07-07 13:00,,2013-07-01 12:00,2013-07-03 08:00,2013-07-01 12:00,2013-07-03 08:00,2013-07-01 12:00,2013-07-03 08:00,2013-07-06 07:00,2013-07-07 13:00,,PT_Normal,,,,,agSS1oxQdk+GozYbSGNiXQ,DX4s+DB7hUuHMSWuFd396Q,,,N,0,0,,,2013-11-05 11:09,2013-11-05 11:09,admin,admin,
527,102244,4512,26194,6590,0,N,N,N,CP_Drtn,TT_Task,DT_FixedDUR2,TK_NotStart,JF721.482,Approval For Vendor Drawings & Specifications,,288,0,16,0,0,0,16,0,0,0,,,,2012-08-28 07:00,2012-08-29 13:00,,2012-07-24 14:00,2012-07-26 10:00,2012-07-24 14:00,2012-07-26 10:00,2012-07-24 14:00,2012-07-26 10:00,2012-08-28 07:00,2012-08-29 13:00,,PT_Normal,,,,,P+6ckmsLOEenmT4MrAJS6Q,xFeCmUgdS0OLH25pLZzIMQ,,,N,0,0,,,2013-11-05 11:09,2013-11-05 11:09,admin,admin,
528,102245,4512,26194,6590,0,N,N,N,CP_Drtn,TT_Task,DT_FixedDUR2,TK_NotStart,JF721.483,P.O Issued,,1183.983333,192,32,0,0,0,32,0,0,0,,,,2012-12-05 13:59,2012-12-09 10:59,,2012-07-26 10:00,2012-07-29 17:00,2012-07-26 10:00,2012-07-29 17:00,2012-07-26 10:00,2012-07-29 17:00,2012-12-05 13:59,2012-12-09 10:59,,PT_Normal,,,,,ICoBDSj2eEKiP8/P3I54UA,qnXKJs7SVE2Aq/+ydLIq0g,,,N,0,0,,,2013-11-05 11:09,2013-11-05 11:09,admin,admin,
529,102246,4512,26195,6590,0,N,N,N,CP_Drtn,TT_Task,DT_FixedDUR2,TK_NotStart,JF721.484,Approval for vendor Drawings & Specifcations,,288,0,24,0,0,0,24,0,0,0,,,,2012-08-28 07:00,2012-08-30 11:00,,2012-07-24 14:00,2012-07-27 10:30,2012-07-24 14:00,2012-07-27 10:30,2012-07-24 14:00,2012-07-27 10:30,2012-08-28 07:00,2012-08-30 11:00,,PT_Normal,,,,,Pk6nkH8SKUCFaEpjjApJrA,cSJ8dgKJP0Ww5ZhDDHiEBQ,,,N,0,0,,,2013-11-05 11:09,2013-11-05 11:09,admin,admin,
530,102247,4512,26195,6590,0,N,N,N,CP_Drtn,TT_Task,DT_FixedDUR2,TK_NotStart,JF721.485,P.O Issued,,1151.983333,160,56,0,0,0,56,0,0,0,,,,2012-12-03 09:59,2012-12-09 10:59,,2012-07-27 10:30,2012-08-02 09:00,2012-07-27 10:30,2012-08-02 09:00,2012-07-27 10:30,2012-08-02 09:00,2012-12-03 09:59,2012-12-09 10:59,,PT_Normal,,,,,tIr1zGijO0uxYXx0sUSCSA,oeNA0lF1IUuYn1p65K4tsA,,,N,0,0,,,2013-11-05 11:09,2013-11-05 11:09,admin,admin,
531,102248,4512,26195,6590,0,N,N,N,CP_Drtn,TT_Task,DT_FixedDUR2,TK_NotStart,JF721.486,Instrumentation Delievered to Ma'aden & Installed,6942,40,0,160,0,1300,1300,160,520,0,520,,,,2013-07-07 13:00,2013-07-24 13:00,,2013-07-03 08:00,2013-07-20 13:00,2013-07-03 08:00,2013-07-20 13:00,2013-07-03 08:00,2013-07-20 13:00,2013-07-07 13:00,2013-07-24 13:00,,PT_Normal,,,,,5QgUIIFkq0yE4oeFMIQyrA,XWpE3LpQKUSrjVSLh/WhAA,,,N,0,0,,,2013-11-05 11:09,2013-11-05 11:09,admin,admin,
532,102249,4512,26195,6590,0,N,N,N,CP_Drtn,TT_Task,DT_FixedDUR2,TK_NotStart,JF721.487,Ma'aden Instrumentation Inspection,6965,40,0,16,0,100,100,16,40,0,40,,,,2013-07-24 13:00,2013-07-26 11:30,,2013-07-20 13:00,2013-07-22 09:00,2013-07-20 13:00,2013-07-22 09:00,2013-07-20 13:00,2013-07-22 09:00,2013-07-24 13:00,2013-07-26 11:30,,PT_Normal,,,,,Lu5h+HBve0SyBc5e2mgmNg,o7LARIfvNEaQ09oTYwd4YA,,,N,0,0,,,2013-11-05 11:09,2013-11-05 11:09,admin,admin,
533,102250,4512,26196,6590,0,N,N,N,CP_Drtn,TT_Task,DT_FixedDUR2,TK_NotStart,JF721.488,Approve Vendor Drawings & Specifcations,,304,0,16,0,0,0,16,0,0,0,,,,2012-08-22 14:00,2012-08-24 12:30,,2012-07-17 15:00,2012-07-19 11:00,2012-07-17 15:00,2012-07-19 11:00,2012-07-17 15:00,2012-07-19 11:00,2012-08-22 14:00,2012-08-24 12:30,,PT_Normal,,,,,VGXueEf8KkSe1D2DT6pnLw,UxxwI734Ikm3B6zma4PbGA,,,N,0,0,,,2013-11-05 11:09,2013-11-05 11:09,admin,admin,
534,102251,4512,26196,6590,0,N,N,N,CP_Drtn,TT_Task,DT_FixedDUR2,TK_NotStart,JF721.489,P.O Issued,,304,0,16,0,0,0,16,0,0,0,,,,2012-08-24 12:30,2012-08-26 11:00,,2012-07-19 11:00,2012-07-21 12:00,2012-07-19 11:00,2012-07-21 12:00,2012-07-19 11:00,2012-07-21 12:00,2012-08-24 12:30,2012-08-26 11:00,,PT_Normal,,,,,7BjTk2pC+Um1J5uquAwHSg,Y+QGEhmC5UqgCTu9l309JA,,,N,0,0,,,2013-11-05 11:09,2013-11-05 11:09,admin,admin,
535,102252,4512,26238,6590,0,N,N,N,CP_Drtn,TT_Task,DT_FixedDUR2,TK_NotStart,JF721.490,Approval for Vendor Drawings & Specifications,,288,0,40,0,0,0,40,0,0,0,,,,2012-08-30 11:00,2012-09-03 16:00,,2012-07-27 10:30,2012-07-31 13:00,2012-07-27 10:30,2012-07-31 13:00,2012-07-27 10:30,2012-07-31 13:00,2012-08-30 11:00,2012-09-03 16:00,,PT_Normal,,,,,or13p55TT0yMyPSxOYA8/g,At760YrmaEqZSF6XKJXmdA,,,N,0,0,,,2013-11-05 11:09,2013-11-05 11:09,admin,admin,
536,102253,4512,26238,6590,0,N,N,N,CP_Drtn,TT_Task,DT_FixedDUR2,TK_NotStart,JF721.491,PO  Issued,,1264,0,40,0,0,0,40,0,0,0,,,,2012-12-19 12:00,2012-12-23 17:00,,2012-07-31 13:00,2012-08-05 08:00,2012-07-31 13:00,2012-08-05 08:00,2012-07-31 13:00,2012-08-05 08:00,2012-12-19 12:00,2012-12-23 17:00,,PT_Normal,,,,,4G2WSAJHWE+MTJKXoRseUg,QM2hzVjO+0OX23YpP0LSlA,,,N,0,0,,,2013-11-05 11:09,2013-11-05 11:09,admin,admin,
537,102254,4512,26239,6590,0,N,N,N,CP_Drtn,TT_Task,DT_FixedDUR2,TK_NotStart,JF721.492,Approval for Vendor Drawings & Specifications,,288,0,40,0,0,0,40,0,0,0,,,,2012-08-30 11:00,2012-09-03 16:00,,2012-07-27 10:30,2012-07-31 13:00,2012-07-27 10:30,2012-07-31 13:00,2012-07-27 10:30,2012-07-31 13:00,2012-08-30 11:00,2012-09-03 16:00,,PT_Normal,,,,,/nwtmNYc/keq2R3epzwqZQ,P4hIy46WnkaAgBahNcd1Fg,,,N,0,0,,,2013-11-05 11:09,2013-11-05 11:09,admin,admin,
538,102255,4512,26239,6590,0,N,N,N,CP_Drtn,TT_Task,DT_FixedDUR2,TK_NotStart,JF721.493,PO issued,,288,0,40,0,0,0,40,0,0,0,,,,2012-09-03 16:00,2012-09-08 11:00,,2012-07-31 13:00,2012-08-05 08:00,2012-07-31 13:00,2012-08-05 08:00,2012-07-31 13:00,2012-08-05 08:00,2012-09-03 16:00,2012-09-08 11:00,,PT_Normal,,,,,PbsWRv/pJ0iMrL/TFQE0Pg,Q+7N4KuxlESJ8vFhIW4qJw,,,N,0,0,,,2013-11-05 11:09,2013-11-05 11:09,admin,admin,
539,102256,4512,26199,6590,0,N,N,N,CP_Drtn,TT_Task,DT_FixedDUR2,TK_NotStart,JF721.494,Approval For vendor Specifcations,,616,0,56,0,0,0,56,0,0,0,,,,2012-10-09 09:00,2012-10-15 10:00,,2012-07-31 13:00,2012-08-06 14:00,2012-07-31 13:00,2012-08-06 14:00,2012-07-31 13:00,2012-08-06 14:00,2012-10-09 09:00,2012-10-15 10:00,,PT_Normal,,,,,9I5mt4+KAEGH4+XIUU2Oqg,y+HmYyh9cEyxgRIPJ0WXkQ,,,N,0,0,,,2013-11-05 11:09,2013-11-05 11:09,admin,admin,
540,102257,4512,26199,6590,0,N,N,N,CP_Drtn,TT_Task,DT_FixedDUR2,TK_NotStart,JF721.495,PO issued,,616,0,24,0,0,0,24,0,0,0,,,,2012-10-15 10:00,2012-10-17 14:00,,2012-08-06 14:00,2012-08-09 08:00,2012-08-06 14:00,2012-08-09 08:00,2012-08-06 14:00,2012-08-09 08:00,2012-10-15 10:00,2012-10-17 14:00,,PT_Normal,,,,,XvbxwQAZ8UyWOR4mKyEM0w,np9x9mx8dE6Sens4t7ctEQ,,,N,0,0,,,2013-11-05 11:09,2013-11-05 11:09,admin,admin,
541,102258,4512,26200,6590,0,N,N,N,CP_Drtn,TT_Task,DT_FixedDUR2,TK_NotStart,JF721.496,Plates,,304,0,728,0,0,0,728,0,0,0,,,,2012-08-26 11:00,2012-11-14 09:00,,2012-07-21 12:00,2012-10-10 15:00,2012-07-21 12:00,2012-10-10 15:00,2012-07-21 12:00,2012-10-10 15:00,2012-08-26 11:00,2012-11-14 09:00,,PT_Normal,,,,,GrmY6vv3TUOUrPSYhD6DXg,p4b5Mw6c2Uau5vTANZNEzw,,,N,0,0,,,2013-11-05 11:09,2013-11-05 11:09,admin,admin,
542,102259,4512,26200,6590,0,N,N,N,CP_Drtn,TT_Task,DT_FixedDUR2,TK_NotStart,JF721.497,Profile Material,,1264,256,248,0,0,0,248,0,0,0,,,,2012-12-24 07:00,2013-01-19 15:00,,2012-08-05 08:00,2012-09-03 16:00,2012-08-05 08:00,2012-09-03 16:00,2012-08-05 08:00,2012-09-03 16:00,2012-12-24 07:00,2013-01-19 15:00,,PT_Normal,,,,,vg5m273DW0ex7qsZXua8vQ,XvbN9j8Um0u+a5vi4V340A,,,N,0,0,,,2013-11-05 11:09,2013-11-05 11:09,admin,admin,
543,102260,4512,26200,6590,0,N,N,N,CP_Drtn,TT_Task,DT_FixedDUR2,TK_NotStart,JF721.498,Pipes & Fittings,,288,0,368,0,0,0,368,0,0,0,,,,2012-09-08 11:00,2012-10-17 14:00,,2012-08-05 08:00,2012-09-16 16:00,2012-08-05 08:00,2012-09-16 16:00,2012-08-05 08:00,2012-09-16 16:00,2012-09-08 11:00,2012-10-17 14:00,,PT_Normal,,,,,dxWElQDG8kCK3d2WJ/xOCA,xlcN0EV8I0SapJEwHcmzTg,,,N,0,0,,,2013-11-05 11:09,2013-11-05 11:09,admin,admin,
544,102261,4512,26201,6590,0,N,N,N,CP_Drtn,TT_Task,DT_FixedDUR2,TK_NotStart,JF721.499,Define Layout,,304,0,32,0,0,0,32,0,0,0,,,,2012-10-16 16:00,2012-10-20 13:00,,2012-09-14 09:30,2012-09-17 14:00,2012-09-14 09:30,2012-09-17 14:00,2012-09-14 09:30,2012-09-17 14:00,2012-10-16 16:00,2012-10-20 13:00,,PT_Normal,,,,,YEhL1a22XUCW3RUe/57fNQ,NqASMdRNOUqFzefQ0Sq3bQ,,,N,0,0,,,2013-11-05 11:09,2013-11-05 11:09,admin,admin,
545,102262,4512,26201,6590,0,N,N,N,CP_Drtn,TT_Task,DT_FixedDUR2,TK_NotStart,JF721.500,Cutting,,304,0,64,0,0,0,64,0,0,0,,,,2012-10-16 16:00,2012-10-23 15:00,,2012-09-14 09:30,2012-09-20 16:00,2012-09-14 09:30,2012-09-20 16:00,2012-09-14 09:30,2012-09-20 16:00,2012-10-16 16:00,2012-10-23 15:00,,PT_Normal,,,,,04gxlKAyBU2RxCblXPjZig,tt3gxgqxak+7rDxte4XbAg,,,N,0,0,,,2013-11-05 11:09,2013-11-05 11:09,admin,admin,
546,102263,4512,26201,6590,0,N,N,N,CP_Drtn,TT_Task,DT_FixedDUR2,TK_NotStart,JF721.501,Fit-up,,304,0,56,0,0,0,56,0,0,0,,,,2012-10-21 11:00,2012-10-28 17:00,,2012-09-18 12:00,2012-09-24 13:00,2012-09-18 12:00,2012-09-24 13:00,2012-09-18 12:00,2012-09-24 13:00,2012-10-21 11:00,2012-10-28 17:00,,PT_Normal,,,,,CysP/67roEeq9tZ2NqNVaA,+bPJdke39EC0UzUc8wEY4A,,,N,0,0,,,2013-11-05 11:09,2013-11-05 11:09,admin,admin,
547,102264,4512,26201,6590,0,N,N,N,CP_Drtn,TT_Task,DT_FixedDUR2,TK_NotStart,JF721.502,Welding,,304,0,64,0,0,0,64,0,0,0,,,,2012-10-23 07:00,2012-10-31 11:00,,2012-09-20 08:00,2012-09-26 17:00,2012-09-20 08:00,2012-09-26 17:00,2012-09-20 08:00,2012-09-26 17:00,2012-10-23 07:00,2012-10-31 11:00,,PT_Normal,,,,,Fn8J9US/Dkm3exbKG385CA,BabspVpVGkKisBRG/u9JMw,,,N,0,0,,,2013-11-05 11:09,2013-11-05 11:09,admin,admin,
548,102265,4512,26201,6590,0,N,N,N,CP_Drtn,TT_Task,DT_FixedDUR2,TK_NotStart,JF721.503,Shop Blasting/Painting,,304,0,56,0,0,0,56,0,0,0,,,,2012-10-28 09:00,2012-11-03 10:00,,2012-09-23 15:00,2012-09-29 16:00,2012-09-23 15:00,2012-09-29 16:00,2012-09-23 15:00,2012-09-29 16:00,2012-10-28 09:00,2012-11-03 10:00,,PT_Normal,,,,,OEvoY97QK0Co/T/1xbtJyw,JgwK0VqNtkWPp1NEl6/QyA,,,N,0,0,,,2013-11-05 11:09,2013-11-05 11:09,admin,admin,
549,102266,4512,26201,6590,0,N,N,N,CP_Drtn,TT_Task,DT_FixedDUR2,TK_NotStart,JF721.504,Inspect & Accept for use,,304,0,16,0,0,0,16,0,0,0,,,,2012-11-03 10:00,2012-11-04 16:00,,2012-09-29 16:00,2012-10-01 12:00,2012-09-29 16:00,2012-10-01 12:00,2012-09-29 16:00,2012-10-01 12:00,2012-11-03 10:00,2012-11-04 16:00,,PT_Normal,,,,,qdWG6uMz30OcLERpegk5eg,NIRxJhgScUO/HK/CeyoG5g,,,N,0,0,,,2013-11-05 11:09,2013-11-05 11:09,admin,admin,
550,102267,4512,26202,6590,0,N,N,N,CP_Drtn,TT_Task,DT_FixedDUR2,TK_NotStart,JF721.505,Define Layout,,616,0,56,0,0,0,56,0,0,0,,,,2012-11-24 15:00,2012-11-30 13:30,,2012-09-17 14:00,2012-09-23 15:00,2012-09-17 14:00,2012-09-23 15:00,2012-09-17 14:00,2012-09-23 15:00,2012-11-24 15:00,2012-11-30 13:30,,PT_Normal,,,,,Awcp4lzkP0qnTf5FZkATOw,KvXnSNnJE0ebZGxmJ4g79A,,,N,0,0,,,2013-11-05 11:09,2013-11-05 11:09,admin,admin,
551,102268,4512,26202,6590,0,N,N,N,CP_Drtn,TT_Task,DT_FixedDUR2,TK_NotStart,JF721.506,Cutting,,616,0,128,0,0,0,128,0,0,0,,,,2012-11-24 15:00,2012-12-08 13:00,,2012-09-17 14:00,2012-10-01 12:00,2012-09-17 14:00,2012-10-01 12:00,2012-09-17 14:00,2012-10-01 12:00,2012-11-24 15:00,2012-12-08 13:00,,PT_Normal,,,,,6iBDPihtpkGVg5ORwaW3jg,HpEj9IuMTkSNMW2leNhO7Q,,,N,0,0,,,2013-11-05 11:09,2013-11-05 11:09,admin,admin,
552,102269,4512,26202,6590,0,N,N,N,CP_Drtn,TT_Task,DT_FixedDUR2,TK_NotStart,JF721.507,Bevelling/Rolling,,616,0,128,0,0,0,128,0,0,0,,,,2012-11-28 07:00,2012-12-11 15:00,,2012-09-20 16:00,2012-10-04 14:00,2012-09-20 16:00,2012-10-04 14:00,2012-09-20 16:00,2012-10-04 14:00,2012-11-28 07:00,2012-12-11 15:00,,PT_Normal,,,,,gUpWo1VNiU+ifWcfDuL+5w,cYzpiAMs+0KOa/HVaZX2AA,,,N,0,0,,,2013-11-05 11:09,2013-11-05 11:09,admin,admin,
553,102270,4512,26202,6590,0,N,N,N,CP_Drtn,TT_Task,DT_FixedDUR2,TK_NotStart,JF721.508,Shop Blasting/Painting,,616,0,168,0,0,0,168,0,0,0,,,,2012-12-02 12:00,2012-12-20 10:00,,2012-09-25 11:00,2012-10-13 14:00,2012-09-25 11:00,2012-10-13 14:00,2012-09-25 11:00,2012-10-13 14:00,2012-12-02 12:00,2012-12-20 10:00,,PT_Normal,,,,,RQzK7Ov7pUyDcFs0MYxMDg,7HNi5PeaV0y2Y2hivMcf9w,,,N,0,0,,,2013-11-05 11:09,2013-11-05 11:09,admin,admin,
554,102271,4512,26202,6590,0,N,N,N,CP_Drtn,TT_Task,DT_FixedDUR2,TK_NotStart,JF721.509,Inspect & Accept for use,,616,0,24,0,0,0,24,0,0,0,,,,2012-12-20 10:00,2012-12-23 09:00,,2012-10-13 14:00,2012-10-16 08:00,2012-10-13 14:00,2012-10-16 08:00,2012-10-13 14:00,2012-10-16 08:00,2012-12-20 10:00,2012-12-23 09:00,,PT_Normal,,,,,zS0Np4YgikuJfd0Hnxp2VQ,2GHiYf/TR0Koqh0FB+0+zg,,,N,0,0,,,2013-11-05 11:09,2013-11-05 11:09,admin,admin,
555,102272,4512,26203,6590,0,N,N,N,CP_Drtn,TT_Task,DT_FixedDUR2,TK_NotStart,JF721.510,Define layout,,1008,0,24,0,0,0,24,0,0,0,,,,2013-01-19 15:00,2013-01-22 09:00,,2012-10-01 12:00,2012-10-03 16:00,2012-10-01 12:00,2012-10-03 16:00,2012-10-01 12:00,2012-10-03 16:00,2013-01-19 15:00,2013-01-22 09:00,,PT_Normal,,,,,MUSz3adB+EOUudBYog9+eg,BObSzZpwSEyt71E/AtUl6w,,,N,0,0,,,2013-11-05 11:09,2013-11-05 11:09,admin,admin,
556,102273,4512,26203,6590,0,N,N,N,CP_Drtn,TT_Task,DT_FixedDUR2,TK_NotStart,JF721.511,Cutting,,1008,0,40,0,0,0,40,0,0,0,,,,2013-01-22 09:00,2013-01-26 14:00,,2012-10-03 16:00,2012-10-08 11:00,2012-10-03 16:00,2012-10-08 11:00,2012-10-03 16:00,2012-10-08 11:00,2013-01-22 09:00,2013-01-26 14:00,,PT_Normal,,,,,1YgqgzNBk0a43Akip/eONg,AmRQTCoh50qjBmbNOJIlPA,,,N,0,0,,,2013-11-05 11:09,2013-11-05 11:09,admin,admin,
557,102274,4512,26203,6590,0,N,N,N,CP_Drtn,TT_Task,DT_FixedDUR2,TK_NotStart,JF721.512,Bevelling,,1008,0,48,0,0,0,48,0,0,0,,,,2013-01-23 15:00,2013-01-28 10:00,,2012-10-06 07:00,2012-10-10 15:00,2012-10-06 07:00,2012-10-10 15:00,2012-10-06 07:00,2012-10-10 15:00,2013-01-23 15:00,2013-01-28 10:00,,PT_Normal,,,,,2o5fsTVIx0mcikJwaK1nZw,yFpHDPcaYUWOe29l70K2vw,,,N,0,0,,,2013-11-05 11:09,2013-11-05 11:09,admin,admin,
558,102275,4512,26203,6590,0,N,N,N,CP_Drtn,TT_Task,DT_FixedDUR2,TK_NotStart,JF721.513,Fit-up/Welding,,1008,0,104,0,0,0,104,0,0,0,,,,2013-01-26 14:00,2013-02-05 15:00,,2012-10-08 11:00,2012-10-19 12:30,2012-10-08 11:00,2012-10-19 12:30,2012-10-08 11:00,2012-10-19 12:30,2013-01-26 14:00,2013-02-05 15:00,,PT_Normal,,,,,+pEAuut9PE+DCN7pTjXx6A,qSE5Fing/0mvKJhg5mIVeA,,,N,0,0,,,2013-11-05 11:09,2013-11-05 11:09,admin,admin,
559,102276,4512,26203,6590,0,N,N,N,CP_Drtn,TT_Task,DT_FixedDUR2,TK_NotStart,JF721.514,Blasting/Painting,,1008,0,72,0,0,0,72,0,0,0,,,,2013-01-31 12:00,2013-02-08 11:30,,2012-10-14 12:00,2012-10-22 09:00,2012-10-14 12:00,2012-10-22 09:00,2012-10-14 12:00,2012-10-22 09:00,2013-01-31 12:00,2013-02-08 11:30,,PT_Normal,,,,,i4hq2aX8vECYeeyO1N52Vg,P4/Fk4uRBEatogu64eu/Nw,,,N,0,0,,,2013-11-05 11:09,2013-11-05 11:09,admin,admin,
560,102277,4512,26203,6590,0,N,N,N,CP_Drtn,TT_Task,DT_FixedDUR2,TK_NotStart,JF721.515,Inspect & Accept for use,,1008,0,16,0,0,0,16,0,0,0,,,,2013-02-08 11:30,2013-02-10 10:00,,2012-10-22 09:00,2012-10-23 15:00,2012-10-22 09:00,2012-10-23 15:00,2012-10-22 09:00,2012-10-23 15:00,2013-02-08 11:30,2013-02-10 10:00,,PT_Normal,,,,,IuseVlUI3UK1OdOsY7MyFw,mf4ZiKwzEkWAlgfh/a1UzQ,,,N,0,0,,,2013-11-05 11:09,2013-11-05 11:09,admin,admin,
561,102278,4512,26204,6590,0,N,N,N,CP_Drtn,TT_Task,DT_FixedDUR2,TK_NotStart,JF721.516,Define Layout,,1200,0,32,0,0,0,32,0,0,0,,,,2013-02-26 12:00,2013-03-02 09:00,,2012-10-19 12:30,2012-10-22 17:00,2012-10-19 12:30,2012-10-22 17:00,2012-10-19 12:30,2012-10-22 17:00,2013-02-26 12:00,2013-03-02 09:00,,PT_Normal,,,,,nubAmXu9+kmSR7698LrYww,4EwGlVvj1Euqj7jLBXyyvw,,,N,0,0,,,2013-11-05 11:09,2013-11-05 11:09,admin,admin,
562,102279,4512,26204,6590,0,N,N,N,CP_Drtn,TT_Task,DT_FixedDUR2,TK_NotStart,JF721.517,Cutting,,1200,0,48,0,0,0,48,0,0,0,,,,2013-03-02 09:00,2013-03-06 17:00,,2012-10-23 07:00,2012-10-29 15:00,2012-10-23 07:00,2012-10-29 15:00,2012-10-23 07:00,2012-10-29 15:00,2013-03-02 09:00,2013-03-06 17:00,,PT_Normal,,,,,hJrjYqPDKU+uaT7bM6p7NA,FnjnSPuQ8EGpxBoPL3gghg,,,N,0,0,,,2013-11-05 11:09,2013-11-05 11:09,admin,admin,
563,102280,4512,26204,6590,0,N,N,N,CP_Drtn,TT_Task,DT_FixedDUR2,TK_NotStart,JF721.518,Fit-Up,,1200,0,72,0,0,0,72,0,0,0,,,,2013-03-07 07:00,2013-03-14 14:00,,2012-10-29 15:00,2012-11-06 12:00,2012-10-29 15:00,2012-11-06 12:00,2012-10-29 15:00,2012-11-06 12:00,2013-03-07 07:00,2013-03-14 14:00,,PT_Normal,,,,,Wjot9IHpuEG/2JR+4uyrRw,2Avp9YRmPUmCASJKMgeCLg,,,N,0,0,,,2013-11-05 11:09,2013-11-05 11:09,admin,admin,
564,102281,4512,26204,6590,0,N,N,N,CP_Drtn,TT_Task,DT_FixedDUR2,TK_NotStart,JF721.519,Welding,,1200,0,88,0,0,0,88,0,0,0,,,,2013-03-19 09:00,2013-03-28 12:00,,2012-11-11 07:00,2012-11-20 10:00,2012-11-11 07:00,2012-11-20 10:00,2012-11-11 07:00,2012-11-20 10:00,2013-03-19 09:00,2013-03-28 12:00,,PT_Normal,,,,,l1lpD2qBckWCPrF42+DDzQ,fKb7wQneJkSqokYzrd7Ntg,,,N,0,0,,,2013-11-05 11:09,2013-11-05 11:09,admin,admin,
565,102282,4512,26204,6590,0,N,N,N,CP_Drtn,TT_Task,DT_FixedDUR2,TK_NotStart,JF721.520,Blasting/Painting,,1200,0,88,0,0,0,88,0,0,0,,,,2013-03-24 12:00,2013-04-02 15:00,,2012-11-15 15:00,2012-11-25 13:00,2012-11-15 15:00,2012-11-25 13:00,2012-11-15 15:00,2012-11-25 13:00,2013-03-24 12:00,2013-04-02 15:00,,PT_Normal,,,,,k0zsgrSQtkeqTjuEYoWIMg,BwP2ymGIUU+c2fXN6sVgJg,,,N,0,0,,,2013-11-05 11:09,2013-11-05 11:09,admin,admin,
566,102283,4512,26204,6590,0,N,N,N,CP_Drtn,TT_Task,DT_FixedDUR2,TK_NotStart,JF721.521,Inspect & Accept for use,,1200,0,24,0,0,0,24,0,0,0,,,,2013-04-02 15:00,2013-04-05 11:30,,2012-11-25 13:00,2012-11-27 17:00,2012-11-25 13:00,2012-11-27 17:00,2012-11-25 13:00,2012-11-27 17:00,2013-04-02 15:00,2013-04-05 11:30,,PT_Normal,,,,,bxofZW+8NkOQCqm1VvaGdA,o+wMiGtSoUKh2J48Anp8Dw,,,N,0,0,,,2013-11-05 11:09,2013-11-05 11:09,admin,admin,
567,102284,4512,26205,6590,0,N,N,N,CP_Drtn,TT_Task,DT_FixedDUR2,TK_NotStart,JF721.522,"Annular,Bottom & Sump",,304,264,56,0,0,0,56,0,0,0,,,,2012-11-04 16:00,2012-11-10 17:00,,2012-10-01 12:00,2012-10-07 13:00,2012-10-01 12:00,2012-10-07 13:00,2012-10-01 12:00,2012-10-07 13:00,2012-11-04 16:00,2012-11-10 17:00,,PT_Normal,,,,,ythHHwDFeEyH4mmLDef6Iw,aL93bd7K20m30+6GK2mPUA,,,N,0,0,,,2013-11-05 11:09,2013-11-05 11:09,admin,admin,
568,102285,4512,26205,6590,0,N,N,N,CP_Drtn,TT_Task,DT_FixedDUR2,TK_NotStart,JF721.523,"Shell Courses #1,#2,#3,#4",,616,576,104,0,0,0,104,0,0,0,,,,2012-12-23 09:00,2013-01-03 08:00,,2012-10-16 08:00,2012-10-28 17:00,2012-10-16 08:00,2012-10-28 17:00,2012-10-16 08:00,2012-10-28 17:00,2012-12-23 09:00,2013-01-03 08:00,,PT_Normal,,,,,iWFqCGIHUU6EJLmcUeh0CQ,mb+jkI/ywU6UywP62LUheA,,,N,0,0,,,2013-11-05 11:09,2013-11-05 11:09,admin,admin,
569,102286,4512,26205,6590,0,N,N,N,CP_Drtn,TT_Task,DT_FixedDUR2,TK_NotStart,JF721.524,Shell Nozzles & Manholes,,1008,968,40,0,0,0,40,0,0,0,,,,2013-02-10 10:00,2013-02-14 10:00,,2012-10-23 15:00,2012-10-29 15:00,2012-10-23 15:00,2012-10-29 15:00,2012-10-23 15:00,2012-10-29 15:00,2013-02-10 10:00,2013-02-14 10:00,,PT_Normal,,,,,hhIuv8rLuE64VQCx8d/F2Q,bYPwWiI3GUaFTpFne1xHmA,,,N,0,0,,,2013-11-05 11:09,2013-11-05 11:09,admin,admin,
570,102287,4512,26205,6590,0,N,N,N,CP_Drtn,TT_Task,DT_FixedDUR2,TK_NotStart,JF721.525,"Platforms,Stairs & Handrails",,1200,1160,56,0,0,0,56,0,0,0,,,,2013-04-05 11:30,2013-04-11 10:00,,2012-11-28 07:00,2012-12-04 08:00,2012-11-28 07:00,2012-12-04 08:00,2012-11-28 07:00,2012-12-04 08:00,2013-04-05 11:30,2013-04-11 10:00,,PT_Normal,,,,,oZ2W6RpR2U6MQOxiPTIcCQ,dfbbgYeH70W47Yg9e8OhUw,,,N,0,0,,,2013-11-05 11:09,2013-11-05 11:09,admin,admin,
571,102288,4512,26205,6590,0,N,N,N,CP_Drtn,TT_Task,DT_FixedDUR2,TK_NotStart,JF721.526,Pipes & Fittings,,288,0,208,0,0,0,208,0,0,0,,,,2012-10-17 14:00,2012-11-10 17:00,,2012-09-16 16:00,2012-10-09 09:00,2012-09-16 16:00,2012-10-09 09:00,2012-09-16 16:00,2012-10-09 09:00,2012-10-17 14:00,2012-11-10 17:00,,PT_Normal,,,,,KmjDdnAfVk27XTER9Q0CMQ,kpaaWoNQ0Ue6jietlQ5Z5Q,,,N,0,0,,,2013-11-05 11:09,2013-11-05 11:09,admin,admin,
572,102289,4512,26205,6590,0,N,N,N,CP_Drtn,TT_Task,DT_FixedDUR2,TK_NotStart,JF721.527,Aluminum Dome Roof,,991.983333,951.983333,728.016667,0,0,0,728.016667,0,0,0,,,,2012-12-09 10:59,2013-02-24 16:00,,2012-08-22 14:00,2012-11-11 07:01,2012-08-22 14:00,2012-11-11 07:01,2012-08-22 14:00,2012-11-11 07:01,2012-12-09 10:59,2013-02-24 16:00,,PT_Normal,,,,,SZlpqfmb3kGFex1v/NwOng,fvBVTZnUAEe8LmzFstdm6w,,,N,0,0,,,2013-11-05 11:09,2013-11-05 11:09,admin,admin,
573,102290,4512,26205,6590,0,N,N,N,CP_Drtn,TT_Task,DT_FixedDUR2,TK_NotStart,JF721.528,Paint Material,,616,328,208,0,0,0,208,0,0,0,,,,2012-10-17 14:00,2012-11-10 17:00,,2012-08-09 08:00,2012-09-03 16:00,2012-08-09 08:00,2012-09-03 16:00,2012-08-09 08:00,2012-09-03 16:00,2012-10-17 14:00,2012-11-10 17:00,,PT_Normal,,,,,elGtFmiJYkyY6yIrDKUwMw,NMnPTBgk00ygxxX6Jhgwmg,,,N,0,0,,,2013-11-05 11:09,2013-11-05 11:09,admin,admin,
574,102291,4512,26206,6590,0,N,N,N,CP_Drtn,TT_Task,DT_FixedDUR2,TK_NotStart,JF721.480,PO Issued,,224,0,16,0,0,0,16,0,0,0,,,,2012-10-10 15:00,2012-10-12 13:30,,2012-09-16 16:00,2012-09-18 12:00,2012-09-16 16:00,2012-09-18 12:00,2012-09-16 16:00,2012-09-18 12:00,2012-10-10 15:00,2012-10-12 13:30,,PT_Normal,,,,,5tC4M9eHTUW8GOKOWd0J8Q,xMKajeOpB0i4h5bLtqRGTg,,,N,0,0,,,2013-11-05 11:09,2013-11-05 11:09,admin,admin,
575,102292,4512,26206,6590,0,N,N,N,CP_Drtn,TT_Task,DT_FixedDUR2,TK_NotStart,JF721.481,Ma'aden Site Delievery,,224,184,56,0,0,0,56,0,0,0,,,,2012-10-12 13:30,2012-10-18 12:00,,2012-09-18 12:00,2012-09-24 13:00,2012-09-18 12:00,2012-09-24 13:00,2012-09-18 12:00,2012-09-24 13:00,2012-10-12 13:30,2012-10-18 12:00,,PT_Normal,,,,,P9Pwwj02jkuZw8tV0koOXw,WxdmX0lSU0yS7+MyaW6J3A,,,N,0,0,,,2013-11-05 11:09,2013-11-05 11:09,admin,admin,
576,102293,4512,26207,6590,0,N,N,N,CP_Drtn,TT_FinMile,DT_FixedDrtn,TK_NotStart,4.5,"Material Requisition approval for Steel plates, Cathodic Protection, field instruments etc.",,288,0,0,0,0,0,0,0,0,0,,,,2012-08-30 11:00,2012-08-30 11:00,,2012-07-27 10:30,2012-07-27 10:30,2012-07-27 10:30,2012-07-27 10:30,2012-07-27 10:30,2012-07-27 10:30,2012-08-30 11:00,2012-08-30 11:00,,PT_Normal,,,,,By9sRNBcCEKG4ZhQcxLjmg,,,,N,0,0,,,2013-11-05 11:09,2013-11-05 11:09,admin,admin,
577,102294,4512,26208,6590,0,N,N,N,CP_Drtn,TT_FinMile,DT_FixedDrtn,TK_NotStart,4.6,Purchase Order placement for Major Materials,,991.983333,0,0,0,0,0,0,0,0,0,,,,2012-12-09 10:59,2012-12-09 10:59,,2012-08-22 14:00,2012-08-22 14:00,2012-08-22 14:00,2012-08-22 14:00,2012-08-22 14:00,2012-08-22 14:00,2012-12-09 10:59,2012-12-09 10:59,,PT_Normal,,,,,pLMKhdfGK0GfTOlHLOLgwA,,,,N,0,0,,,2013-11-05 11:09,2013-11-05 11:09,admin,admin,
578,102295,4512,26209,6590,0,N,N,N,CP_Drtn,TT_FinMile,DT_FixedDrtn,TK_NotStart,4.11,Complete Installation of Cathodic Protection,,40,0,0,0,0,0,0,0,0,0,,,,2013-07-07 13:00,2013-07-07 13:00,,2013-07-03 08:00,2013-07-03 08:00,2013-07-03 08:00,2013-07-03 08:00,2013-07-03 08:00,2013-07-03 08:00,2013-07-07 13:00,2013-07-07 13:00,,PT_Normal,,,,,Tv5G2hr1VkO7cj3PbhtIAQ,,,,N,0,0,,,2013-11-05 11:09,2013-11-05 11:09,admin,admin,
579,102296,4512,26210,6590,0,N,N,N,CP_Drtn,TT_FinMile,DT_FixedDrtn,TK_NotStart,4.12,Complete Installation for instruments,,40,0,0,0,0,0,0,0,0,0,,,,2013-07-26 11:30,2013-07-26 11:30,,2013-07-22 09:00,2013-07-22 09:00,2013-07-22 09:00,2013-07-22 09:00,2013-07-22 09:00,2013-07-22 09:00,2013-07-26 11:30,2013-07-26 11:30,,PT_Normal,,,,,8fAS9uL7lUCCixg44yLqAQ,,,,N,0,0,,,2013-11-05 11:09,2013-11-05 11:09,admin,admin,
580,102297,4512,26211,6590,0,N,N,N,CP_Drtn,TT_FinMile,DT_FixedDrtn,TK_NotStart,4.8,Supply of materials to Site,,288,248,0,0,0,0,0,0,0,0,,,,2012-11-10 17:00,2012-11-10 17:00,,2012-10-09 09:00,2012-10-09 09:00,2012-10-09 09:00,2012-10-09 09:00,2012-10-09 09:00,2012-10-09 09:00,2012-11-10 17:00,2012-11-10 17:00,,PT_Normal,,,,,WOFBANpAH0C8w9tf5oFjwg,,,,N,0,0,,,2013-11-05 11:09,2013-11-05 11:09,admin,admin,
581,102298,4512,26213,6590,0,N,N,N,CP_Drtn,TT_Task,DT_FixedDUR2,TK_NotStart,JF721.529,Rental For Workers & Engineers Accomodation with Facilities,6915,40,0,16,0,40,40,16,20,0,20,,,,2012-08-05 08:00,2012-08-06 14:00,,2012-07-31 13:00,2012-08-02 09:00,2012-07-31 13:00,2012-08-02 09:00,2012-07-31 13:00,2012-08-02 09:00,2012-08-05 08:00,2012-08-06 14:00,,PT_Normal,,,,,lCR4acukxEWj17a9rCzq1Q,HrSgeaSbv0CSiWrOgcgh6Q,,,N,0,0,,,2013-11-05 11:09,2013-11-05 11:09,admin,admin,
582,102299,4512,26213,6590,0,N,N,N,CP_Drtn,TT_Task,DT_FixedDUR2,TK_NotStart,JF721.531,Ma'aden Inspection & Approval for Portacabins,6915,40,0,8,0,20,20,8,0,0,0,,,,2012-10-08 11:00,2012-10-09 09:00,,2012-10-03 16:00,2012-10-04 14:00,2012-10-03 16:00,2012-10-04 14:00,2012-10-03 16:00,2012-10-04 14:00,2012-10-08 11:00,2012-10-09 09:00,,PT_Normal,,,,,g/FEkGuAt0m/3qZSzbmYlQ,gfOjc+CVD02J1vIWbNmX4Q,,,N,0,0,,,2013-11-05 11:09,2013-11-05 11:09,admin,admin,
583,102300,4512,26213,6590,0,N,N,N,CP_Drtn,TT_Task,DT_FixedDUR2,TK_NotStart,JF721.530,Complete Mobilize AZ Equipment to Site & Prepare the site fabrication yard,6951,40,0,552,0,4140,4140,552,2070,0,2070,,,,2012-08-06 14:00,2012-10-08 11:00,,2012-08-02 09:00,2012-10-03 16:00,2012-08-02 09:00,2012-10-03 16:00,2012-08-02 09:00,2012-10-03 16:00,2012-08-06 14:00,2012-10-08 11:00,,PT_Normal,,,,,AA1BoBVCr0ahsmzt6rSQJw,MMvSbrC2QkyGClDJyH1uJQ,,,N,0,0,,,2013-11-05 11:09,2013-11-05 11:09,admin,admin,
584,102301,4512,26214,6590,0,N,N,N,CP_Drtn,TT_Task,DT_FixedDUR2,TK_NotStart,JF721.532,Layout/Stake-out,6942,40,0,24,0,200,200,24,60,0,60,,,,2012-10-09 09:00,2012-10-11 13:00,,2012-10-04 14:00,2012-10-07 13:00,2012-10-04 14:00,2012-10-07 13:00,2012-10-04 14:00,2012-10-07 13:00,2012-10-09 09:00,2012-10-11 13:00,,PT_Normal,,,,,XB56zTeUxkO9vKDVDcv3Aw,zEeV7AYxDU6oxVE21A97rA,,,N,0,0,,,2013-11-05 11:09,2013-11-05 11:09,admin,admin,
585,102302,4512,26214,6590,0,N,N,N,CP_Drtn,TT_Task,DT_FixedDUR2,TK_NotStart,JF721.533,Excavation,6942,40,0,80,0,1080,1080,80,360,0,360,,,,2012-10-10 07:00,2012-10-18 12:00,,2012-10-06 07:00,2012-10-14 12:00,2012-10-06 07:00,2012-10-14 12:00,2012-10-06 07:00,2012-10-14 12:00,2012-10-10 07:00,2012-10-18 12:00,,PT_Normal,,,,,30NU4hHbTkeCex7FakkSSQ,A40lJUmBtky36sGaQyLSlg,,,N,0,0,,,2013-11-05 11:09,2013-11-05 11:09,admin,admin,
586,102303,4512,26214,6590,0,N,N,N,CP_Drtn,TT_Task,DT_FixedDUR2,TK_NotStart,JF721.534,SteelWorks/Formworks,6980,40,0,56,0,980,980,56,210,0,210,,,,2012-10-18 12:00,2012-10-24 13:00,,2012-10-14 12:00,2012-10-20 13:00,2012-10-14 12:00,2012-10-20 13:00,2012-10-14 12:00,2012-10-20 13:00,2012-10-18 12:00,2012-10-24 13:00,,PT_Normal,,,,,NXl4pSFlMU+tiyAZQdxWYA,OqdqJmCL+EKcmdEpK9P4sA,,,N,0,0,,,2013-11-05 11:09,2013-11-05 11:09,admin,admin,
587,102304,4512,26214,6590,0,N,N,N,CP_Drtn,TT_Task,DT_FixedDUR2,TK_NotStart,JF721.535,Soil Compaction,6965,40,0,48,0,900,900,48,240,0,240,,,,2012-10-24 13:00,2012-10-31 11:00,,2012-10-20 13:00,2012-10-25 11:00,2012-10-20 13:00,2012-10-25 11:00,2012-10-20 13:00,2012-10-25 11:00,2012-10-24 13:00,2012-10-31 11:00,,PT_Normal,,,,,d0rgPUpKDU6Z/remWPKbEw,Fw1ZJ+kPUUypXcJsWVdREg,,,N,0,0,,,2013-11-05 11:09,2013-11-05 11:09,admin,admin,
588,102305,4512,26215,6590,0,N,N,N,CP_Drtn,TT_Task,DT_FixedDUR2,TK_NotStart,JF721.540,Erect & Weld Annular Plates,6942,40,0,120,0,1540,1540,120,630,0,630,,,,2012-11-11 07:00,2012-11-23 14:30,,2012-11-06 12:00,2012-11-19 12:00,2012-11-06 12:00,2012-11-19 12:00,2012-11-06 12:00,2012-11-19 12:00,2012-11-11 07:00,2012-11-23 14:30,,PT_Normal,,,,,XpgsZSW+s0Cxzfv6YUX+Jw,wAcsRKLcHkq/L3INr7lwpw,,,N,0,0,,,2013-11-05 11:09,2013-11-05 11:09,admin,admin,
589,102306,4512,26215,6590,0,N,N,N,CP_Drtn,TT_Task,DT_FixedDUR2,TK_NotStart,JF721.541,Erect & Tack Bottom Plates,6951,40,0,160,0,1380,1380,160,600,0,600,,,,2012-11-24 07:00,2012-12-10 17:00,,2012-11-19 12:00,2012-12-06 12:00,2012-11-19 12:00,2012-12-06 12:00,2012-11-19 12:00,2012-12-06 12:00,2012-11-24 07:00,2012-12-10 17:00,,PT_Normal,,,,,YSCEcuZ6mkWZsQg7qoJeYw,110SImtgt0aH/kqL4icYqg,,,N,0,0,,,2013-11-05 11:09,2013-11-05 11:09,admin,admin,
590,102307,4512,26215,6590,0,N,N,N,CP_Drtn,TT_Task,DT_FixedDUR2,TK_NotStart,JF721.542,Welding of Bottom Plates,6968,40,0,200,0,1610,1610,200,560,0,560,,,,2012-12-11 07:00,2013-01-01 12:00,,2012-12-06 12:00,2012-12-27 17:00,2012-12-06 12:00,2012-12-27 17:00,2012-12-06 12:00,2012-12-27 17:00,2012-12-11 07:00,2013-01-01 12:00,,PT_Normal,,,,,nCMvFLOhKUi22MFwW0SB8Q,zWD8t9dWWk6r42mM7S9ODg,,,N,0,0,,,2013-11-05 11:09,2013-11-05 11:09,admin,admin,
591,102308,4512,26215,6590,0,N,N,N,CP_Drtn,TT_Task,DT_FixedDUR2,TK_NotStart,JF721.543,Visual Inspection & Cleaning,6935,40,0,8,0,220,220,8,20,0,20,,,,2013-01-01 12:00,2013-01-02 10:00,,2012-12-28 09:30,2012-12-29 10:00,2012-12-28 09:30,2012-12-29 10:00,2012-12-28 09:30,2012-12-29 10:00,2013-01-01 12:00,2013-01-02 10:00,,PT_Normal,,,,,OschH9R5IEKLGbFnu7C++w,stTKlzl250O8vdnn2608yQ,,,N,0,0,,,2013-11-05 11:09,2013-11-05 11:09,admin,admin,
592,102309,4512,26215,6590,0,N,N,N,CP_Drtn,TT_Task,DT_FixedDUR2,TK_NotStart,JF721.544,Carry Out NDT & Vaccuum Box Test,6935,40,0,16,0,480,480,16,40,0,40,,,,2013-01-02 10:00,2013-01-03 16:00,,2012-12-29 10:00,2012-12-30 16:00,2012-12-29 10:00,2012-12-30 16:00,2012-12-29 10:00,2012-12-30 16:00,2013-01-02 10:00,2013-01-03 16:00,,PT_Normal,,,,,rgm0w0zr1E+xT6i7Zc6m+A,TJThdccDb02ykkVKXx6c/Q,,,N,0,0,,,2013-11-05 11:09,2013-11-05 11:09,admin,admin,
593,102310,4512,26216,6590,0,N,N,N,CP_Drtn,TT_Task,DT_FixedDUR2,TK_NotStart,JF721.545,Prepare Shell Course # 1 for Erection,6951,40,0,24,0,240,240,24,100,0,100,,,,2013-01-03 08:00,2013-01-05 17:00,,2012-12-30 08:00,2013-01-01 12:00,2012-12-30 08:00,2013-01-01 12:00,2012-12-30 08:00,2013-01-01 12:00,2013-01-03 08:00,2013-01-05 17:00,,PT_Normal,,,,,IBPUO99HjES8ANUsnndSQQ,XgtPMJGhUk+gdCHLmZFEXA,,,N,0,0,,,2013-11-05 11:09,2013-11-05 11:09,admin,admin,
594,102311,4512,26216,6590,0,N,N,N,CP_Drtn,TT_Task,DT_FixedDUR2,TK_NotStart,JF721.546,Erect & Tack Shell Course # 1,6951,40,0,40,0,500,500,40,200,0,200,,,,2013-01-06 07:00,2013-01-09 17:00,,2013-01-01 12:00,2013-01-05 17:00,2013-01-01 12:00,2013-01-05 17:00,2013-01-01 12:00,2013-01-05 17:00,2013-01-06 07:00,2013-01-09 17:00,,PT_Normal,,,,,5fYnSJSbXUOhx5/opp0+tg,lYIICyevK0KWhlRfcxgE9Q,,,N,0,0,,,2013-11-05 11:09,2013-11-05 11:09,admin,admin,
595,102312,4512,26216,6590,0,N,N,N,CP_Drtn,TT_Task,DT_FixedDUR2,TK_NotStart,JF721.547,Weld Outer Vertical Seam,6942,40,0,32,0,500,500,32,200,0,200,,,,2013-01-06 15:00,2013-01-09 17:00,,2013-01-02 10:00,2013-01-05 17:00,2013-01-02 10:00,2013-01-05 17:00,2013-01-02 10:00,2013-01-05 17:00,2013-01-06 15:00,2013-01-09 17:00,,PT_Normal,,,,,rGtrfbhER06vGrWRjqapyg,QZ+VUGcZFEqSWYekOyWirA,,,N,0,0,,,2013-11-05 11:09,2013-11-05 11:09,admin,admin,
596,102313,4512,26216,6590,0,N,N,N,CP_Drtn,TT_Task,DT_FixedDUR2,TK_NotStart,JF721.548,Backgouge & NDT Inside Vertical Seam,6965,40,0,32,0,500,500,32,180,0,180,,,,2013-01-07 13:00,2013-01-10 15:00,,2013-01-03 08:00,2013-01-06 15:00,2013-01-03 08:00,2013-01-06 15:00,2013-01-03 08:00,2013-01-06 15:00,2013-01-07 13:00,2013-01-10 15:00,,PT_Normal,,,,,9svCqvqXTkyvCbEZhnCbcg,Oquglvz0g0+sTQlwVp+Mfg,,,N,0,0,,,2013-11-05 11:09,2013-11-05 11:09,admin,admin,
597,102314,4512,26216,6590,0,N,N,N,CP_Drtn,TT_Task,DT_FixedDUR2,TK_NotStart,JF721.549,Weld Inside Vertical Seam,6968,40,0,32,0,500,500,32,220,0,220,,,,2013-01-08 11:00,2013-01-12 08:00,,2013-01-03 16:00,2013-01-07 13:00,2013-01-03 16:00,2013-01-07 13:00,2013-01-03 16:00,2013-01-07 13:00,2013-01-08 11:00,2013-01-12 08:00,,PT_Normal,,,,,D1phn+rRVkm1fIrQOQBLPg,bNgvLtxoF0WK2nioT03ing,,,N,0,0,,,2013-11-05 11:09,2013-11-05 11:09,admin,admin,
598,102315,4512,26217,6590,0,N,N,N,CP_Drtn,TT_Task,DT_FixedDUR2,TK_NotStart,JF721.550,Prepare Shell Course # 2 for Erection,6951,40,0,24,0,270,270,24,120,0,120,,,,2013-01-10 07:00,2013-01-12 16:00,,2013-01-06 07:00,2013-01-08 11:00,2013-01-06 07:00,2013-01-08 11:00,2013-01-06 07:00,2013-01-08 11:00,2013-01-10 07:00,2013-01-12 16:00,,PT_Normal,,,,,Ks196EUOoEmZpJlzBhgmWQ,znGT1AiRzUexYVr8dhKCng,,,N,0,0,,,2013-11-05 11:09,2013-11-05 11:09,admin,admin,
599,102316,4512,26217,6590,0,N,N,N,CP_Drtn,TT_Task,DT_FixedDUR2,TK_NotStart,JF721.551,Erect & Tack Shell Course # 2,6951,40,0,24,0,520,520,24,240,0,240,,,,2013-01-12 16:00,2013-01-15 10:00,,2013-01-08 11:00,2013-01-10 15:00,2013-01-08 11:00,2013-01-10 15:00,2013-01-08 11:00,2013-01-10 15:00,2013-01-12 16:00,2013-01-15 10:00,,PT_Normal,,,,,WgiVqLajzUSeGZwU6QZgSA,S0FZWc0Rh0uCp9rpJu0UFw,,,N,0,0,,,2013-11-05 11:09,2013-11-05 11:09,admin,admin,
600,102317,4512,26217,6590,0,N,N,N,CP_Drtn,TT_Task,DT_FixedDUR2,TK_NotStart,JF721.552,Weld Outer Vertical Seam,6935,40,0,40,0,750,750,40,300,0,300,,,,2013-01-13 14:00,2013-01-17 14:00,,2013-01-09 09:00,2013-01-13 14:00,2013-01-09 09:00,2013-01-13 14:00,2013-01-09 09:00,2013-01-13 14:00,2013-01-13 14:00,2013-01-17 14:00,,PT_Normal,,,,,DODqhyuVLkyX9USpYtFOjw,02x2RGlq8UyrSQ1smyHvXA,,,N,0,0,,,2013-11-05 11:09,2013-11-05 11:09,admin,admin,
601,102318,4512,26217,6590,0,N,N,N,CP_Drtn,TT_Task,DT_FixedDUR2,TK_NotStart,JF721.553,Backgouge & NDT Inside Vertical Seam,6964,40,0,32,0,540,540,32,240,0,240,,,,2013-01-14 12:00,2013-01-17 14:00,,2013-01-10 07:00,2013-01-13 14:00,2013-01-10 07:00,2013-01-13 14:00,2013-01-10 07:00,2013-01-13 14:00,2013-01-14 12:00,2013-01-17 14:00,,PT_Normal,,,,,SI0l9W2kjESEQYxoaRAUQQ,OTH2MBl8/0+b90QwPRl6HA,,,N,0,0,,,2013-11-05 11:09,2013-11-05 11:09,admin,admin,
602,102319,4512,26217,6590,0,N,N,N,CP_Drtn,TT_Task,DT_FixedDUR2,TK_NotStart,JF721.554,Weld Inside Vertical Seam,6935,40,0,32,0,460,460,32,240,0,240,,,,2013-01-15 10:00,2013-01-18 14:30,,2013-01-10 15:00,2013-01-14 12:00,2013-01-10 15:00,2013-01-14 12:00,2013-01-10 15:00,2013-01-14 12:00,2013-01-15 10:00,2013-01-18 14:30,,PT_Normal,,,,,IkLs+kratkyAZKHAjY/Ukg,RfSppuVpEkauvhzPvVlSOQ,,,N,0,0,,,2013-11-05 11:09,2013-11-05 11:09,admin,admin,
603,102320,4512,26217,6590,0,N,N,N,CP_Drtn,TT_Task,DT_FixedDUR2,TK_NotStart,JF721.555,"""""Fit & Tack Horizontal Seam between Shell Course # 1 & 2""""",6942,40,0,32,0,400,400,32,240,0,240,,,,2013-01-16 08:00,2013-01-19 15:00,,2013-01-12 08:00,2013-01-15 10:00,2013-01-12 08:00,2013-01-15 10:00,2013-01-12 08:00,2013-01-15 10:00,2013-01-16 08:00,2013-01-19 15:00,,PT_Normal,,,,,5DohgEa5/0+wCRMa1irKnQ,i+siZMRFOEWWPhpzGgTm/A,,,N,0,0,,,2013-11-05 11:09,2013-11-05 11:09,admin,admin,
604,102321,4512,26217,6590,0,N,N,N,CP_Drtn,TT_Task,DT_FixedDUR2,TK_NotStart,JF721.556,"""""Weld Outer Horizontal Seam between Shell Course # 1 & 2""""",6942,40,0,48,0,1040,1040,48,480,0,480,,,,2013-01-16 16:00,2013-01-22 09:00,,2013-01-12 16:00,2013-01-17 14:00,2013-01-12 16:00,2013-01-17 14:00,2013-01-12 16:00,2013-01-17 14:00,2013-01-16 16:00,2013-01-22 09:00,,PT_Normal,,,,,NEQmOprvSkWY0Gi/hoSgcw,nmGtj9Je2EqNDoqQVv1N1g,,,N,0,0,,,2013-11-05 11:09,2013-11-05 11:09,admin,admin,
605,102322,4512,26217,6590,0,N,N,N,CP_Drtn,TT_Task,DT_FixedDUR2,TK_NotStart,JF721.557,"""""Backgouge & NDT Inside Horizontal Seam between Shell Course# 1 & 2""""",6935,40,0,32,0,520,520,32,240,0,240,,,,2013-01-17 14:00,2013-01-21 11:00,,2013-01-13 14:00,2013-01-16 16:00,2013-01-13 14:00,2013-01-16 16:00,2013-01-13 14:00,2013-01-16 16:00,2013-01-17 14:00,2013-01-21 11:00,,PT_Normal,,,,,TgL1zGMLdEq84MCVRIY+Aw,sy+IrWUhXkughQFX+iL5XA,,,N,0,0,,,2013-11-05 11:09,2013-11-05 11:09,admin,admin,
606,102323,4512,26217,6590,0,N,N,N,CP_Drtn,TT_Task,DT_FixedDUR2,TK_NotStart,JF721.558,"Weld Inner Horizontal Seam between Shell Course # 1 & 2""""",6935,40,0,32,0,540,540,32,240,0,240,,,,2013-01-19 07:00,2013-01-22 09:00,,2013-01-14 12:00,2013-01-17 14:00,2013-01-14 12:00,2013-01-17 14:00,2013-01-14 12:00,2013-01-17 14:00,2013-01-19 07:00,2013-01-22 09:00,,PT_Normal,,,,,NbMPr8F8pUaxEIL9EgT/aA,V2cmtQD/9kqksXaVitT7Pg,,,N,0,0,,,2013-11-05 11:09,2013-11-05 11:09,admin,admin,
607,102324,4512,26218,6590,0,N,N,N,CP_Drtn,TT_Task,DT_FixedDUR2,TK_NotStart,JF721.559,Prepare Shell Course # 3 for Erection,6942,40,0,24,0,270,270,24,110,0,110,,,,2013-01-19 07:00,2013-01-21 11:00,,2013-01-14 12:00,2013-01-16 16:00,2013-01-14 12:00,2013-01-16 16:00,2013-01-14 12:00,2013-01-16 16:00,2013-01-19 07:00,2013-01-21 11:00,,PT_Normal,,,,,1CPV1yPlx0+gD6xP2+71Pg,0dF8XEJAR0um2y0CtZrHCA,,,N,0,0,,,2013-11-05 11:09,2013-11-05 11:09,admin,admin,
608,102325,4512,26218,6590,0,N,N,N,CP_Drtn,TT_Task,DT_FixedDUR2,TK_NotStart,JF721.560,Erect & Tack Shell Course # 3,6951,40,0,32,0,540,540,32,200,0,200,,,,2013-01-21 11:00,2013-01-24 13:00,,2013-01-16 16:00,2013-01-20 13:00,2013-01-16 16:00,2013-01-20 13:00,2013-01-16 16:00,2013-01-20 13:00,2013-01-21 11:00,2013-01-24 13:00,,PT_Normal,,,,,jXEoCDvSrk2LSME9ayGEnw,zAQOLeothkewiBEgPtyU3w,,,N,0,0,,,2013-11-05 11:09,2013-11-05 11:09,admin,admin,
609,102326,4512,26218,6590,0,N,N,N,CP_Drtn,TT_Task,DT_FixedDUR2,TK_NotStart,JF721.561,Weld Outer Vertical Seam,6965,40,0,40,0,780,780,40,360,0,360,,,,2013-01-22 09:00,2013-01-26 14:00,,2013-01-17 14:00,2013-01-22 09:00,2013-01-17 14:00,2013-01-22 09:00,2013-01-17 14:00,2013-01-22 09:00,2013-01-22 09:00,2013-01-26 14:00,,PT_Normal,,,,,Rb6GH3+fcU+OAaXOmKu+9A,vwMCXD/taEyiVqs1zuTkSg,,,N,0,0,,,2013-11-05 11:09,2013-11-05 11:09,admin,admin,
610,102327,4512,26218,6590,0,N,N,N,CP_Drtn,TT_Task,DT_FixedDUR2,TK_NotStart,JF721.562,Backgouge & NDT Inside Vertical Seam,6942,40,0,32,0,540,540,32,240,0,240,,,,2013-01-23 07:00,2013-01-26 14:00,,2013-01-19 07:00,2013-01-22 09:00,2013-01-19 07:00,2013-01-22 09:00,2013-01-19 07:00,2013-01-22 09:00,2013-01-23 07:00,2013-01-26 14:00,,PT_Normal,,,,,L6WaoDUHzkSGBN8wikt6WA,FkRXA7HHrUuzrqNxnnIPWQ,,,N,0,0,,,2013-11-05 11:09,2013-11-05 11:09,admin,admin,
611,102328,4512,26218,6590,0,N,N,N,CP_Drtn,TT_Task,DT_FixedDUR2,TK_NotStart,JF721.563,Weld Inside Vertical Seam,6942,40,0,32,0,540,540,32,240,0,240,,,,2013-01-23 15:00,2013-01-27 11:00,,2013-01-19 15:00,2013-01-22 17:00,2013-01-19 15:00,2013-01-22 17:00,2013-01-19 15:00,2013-01-22 17:00,2013-01-23 15:00,2013-01-27 11:00,,PT_Normal,,,,,EkSzFBnA6UqI18chyjY/JQ,Z68p+vy+CEihIDlquyT8Bw,,,N,0,0,,,2013-11-05 11:09,2013-11-05 11:09,admin,admin,
612,102329,4512,26218,6590,0,N,N,N,CP_Drtn,TT_Task,DT_FixedDUR2,TK_NotStart,JF721.564,"""""Fit & Tack Horizontal Seam between Shell Course # 2 & 3""""",6942,40,0,32,0,540,540,32,240,0,240,,,,2013-01-24 13:00,2013-01-27 19:00,,2013-01-20 13:00,2013-01-23 15:00,2013-01-20 13:00,2013-01-23 15:00,2013-01-20 13:00,2013-01-23 15:00,2013-01-24 13:00,2013-01-27 19:00,,PT_Normal,,,,,ZdakqEXIHki9a7GNtTvFKw,yO4QpAPPZUm/ZuKMLUlwxA,,,N,0,0,,,2013-11-05 11:09,2013-11-05 11:09,admin,admin,
613,102330,4512,26218,6590,0,N,N,N,CP_Drtn,TT_Task,DT_FixedDUR2,TK_NotStart,JF721.565,"""""Weld Outer Horizontal Seam between Shell Course # 2 & 3""""",6942,40,0,48,0,1040,1040,48,480,0,480,,,,2013-01-25 13:30,2013-01-29 16:00,,2013-01-21 11:00,2013-01-26 14:00,2013-01-21 11:00,2013-01-26 14:00,2013-01-21 11:00,2013-01-26 14:00,2013-01-25 13:30,2013-01-29 16:00,,PT_Normal,,,,,RptsGsNuvkKxYG/rfdsU2g,FqAnNlhx/Uaj83WHY9IKxg,,,N,0,0,,,2013-11-05 11:09,2013-11-05 11:09,admin,admin,
614,102331,4512,26218,6590,0,N,N,N,CP_Drtn,TT_Task,DT_FixedDUR2,TK_NotStart,JF721.566,"""""Backgouge & NDT Inside Horizontal Seam between Shell Course# 2 & 3""""",6942,40,0,32,0,500,500,32,220,0,220,,,,2013-01-26 14:00,2013-01-29 08:00,,2013-01-22 09:00,2013-01-25 13:30,2013-01-22 09:00,2013-01-25 13:30,2013-01-22 09:00,2013-01-25 13:30,2013-01-26 14:00,2013-01-29 08:00,,PT_Normal,,,,,99Hn+znuO0e6WJnvuzGEGQ,9YqBeljKO0qZKYRZnZ9kzA,,,N,0,0,,,2013-11-05 11:09,2013-11-05 11:09,admin,admin,
615,102332,4512,26218,6590,0,N,N,N,CP_Drtn,TT_Task,DT_FixedDUR2,TK_NotStart,JF721.567,"Weld Inner Horizontal Seam between Shell Course # 2 & 3""""",6942,40,0,32,0,540,540,32,240,0,240,,,,2013-01-27 11:00,2013-01-29 16:00,,2013-01-23 07:00,2013-01-26 14:00,2013-01-23 07:00,2013-01-26 14:00,2013-01-23 07:00,2013-01-26 14:00,2013-01-27 11:00,2013-01-29 16:00,,PT_Normal,,,,,KJldZhmq50Cw7EEoJcS8ew,AYzaOzcC+0SVspGFh3omtg,,,N,0,0,,,2013-11-05 11:09,2013-11-05 11:09,admin,admin,
616,102333,4512,26219,6590,0,N,N,N,CP_Drtn,TT_Task,DT_FixedDUR2,TK_NotStart,JF721.568,Prepare Shell Course # 4 for Erection,6942,40,0,24,0,270,270,24,120,0,120,,,,2013-01-29 16:00,2013-02-01 12:30,,2013-01-26 14:00,2013-01-28 10:00,2013-01-26 14:00,2013-01-28 10:00,2013-01-26 14:00,2013-01-28 10:00,2013-01-29 16:00,2013-02-01 12:30,,PT_Normal,,,,,LGOdPcfGOUapFBHSfiBaCA,Bh8dUtSXV0e+Ksnyty3PvQ,,,N,0,0,,,2013-11-05 11:09,2013-11-05 11:09,admin,admin,
617,102334,4512,26219,6590,0,N,N,N,CP_Drtn,TT_Task,DT_FixedDUR2,TK_NotStart,JF721.569,Erect & Tack Shell Course # 4,6965,40,0,32,0,520,520,32,240,0,240,,,,2013-02-01 12:30,2013-02-04 17:00,,2013-01-28 10:00,2013-01-31 12:00,2013-01-28 10:00,2013-01-31 12:00,2013-01-28 10:00,2013-01-31 12:00,2013-02-01 12:30,2013-02-04 17:00,,PT_Normal,,,,,jqwbtCVZp02RPMOf0ocsmw,FnpgCCzPpk6P25YAzjb7FA,,,N,0,0,,,2013-11-05 11:09,2013-11-05 11:09,admin,admin,
618,102335,4512,26219,6590,0,N,N,N,CP_Drtn,TT_Task,DT_FixedDUR2,TK_NotStart,JF721.570,Weld Outer Vertical Seam,6942,40,0,40,0,780,780,40,360,0,360,,,,2013-02-02 13:00,2013-02-06 13:00,,2013-01-29 08:00,2013-02-02 13:00,2013-01-29 08:00,2013-02-02 13:00,2013-01-29 08:00,2013-02-02 13:00,2013-02-02 13:00,2013-02-06 13:00,,PT_Normal,,,,,bywGyXGys0u+McXdYZxbhQ,5cVgI51C00+1j2h27EgbEw,,,N,0,0,,,2013-11-05 11:09,2013-11-05 11:09,admin,admin,
619,102336,4512,26219,6590,0,N,N,N,CP_Drtn,TT_Task,DT_FixedDUR2,TK_NotStart,JF721.571,Backgouge & NDT Inside Vertical Seam,6942,40,0,32,0,540,540,32,240,0,240,,,,2013-02-03 11:00,2013-02-06 13:00,,2013-01-29 16:00,2013-02-02 13:00,2013-01-29 16:00,2013-02-02 13:00,2013-01-29 16:00,2013-02-02 13:00,2013-02-03 11:00,2013-02-06 13:00,,PT_Normal,,,,,iHME7ThFw0yDn3i+6E3iLA,oNcenL9t7kmxM4cI6cnKHA,,,N,0,0,,,2013-11-05 11:09,2013-11-05 11:09,admin,admin,
620,102337,4512,26219,6590,0,N,N,N,CP_Drtn,TT_Task,DT_FixedDUR2,TK_NotStart,JF721.572,Weld Inside Vertical Seam,6935,40,0,32,0,520,520,32,220,0,220,,,,2013-02-04 09:00,2013-02-07 11:00,,2013-01-30 14:00,2013-02-03 11:00,2013-01-30 14:00,2013-02-03 11:00,2013-01-30 14:00,2013-02-03 11:00,2013-02-04 09:00,2013-02-07 11:00,,PT_Normal,,,,,b8oYdDwqf0m61yN+CZzGEg,AOO+KXYiykWoBvXrHLTISg,,,N,0,0,,,2013-11-05 11:09,2013-11-05 11:09,admin,admin,
621,102338,4512,26219,6590,0,N,N,N,CP_Drtn,TT_Task,DT_FixedDUR2,TK_NotStart,JF721.573,"""""Fit & Tack Horizontal Seam between Shell Course # 3 & 4""""",6942,40,0,32,0,520,520,32,240,0,240,,,,2013-02-05 07:00,2013-02-08 11:30,,2013-01-31 12:00,2013-02-04 09:00,2013-01-31 12:00,2013-02-04 09:00,2013-01-31 12:00,2013-02-04 09:00,2013-02-05 07:00,2013-02-08 11:30,,PT_Normal,,,,,zt/hBZmNtkuoySqKShHD8Q,f+uNhvTdY0W8iTmTyN0P+Q,,,N,0,0,,,2013-11-05 11:09,2013-11-05 11:09,admin,admin,
622,102339,4512,26219,6590,0,N,N,N,CP_Drtn,TT_Task,DT_FixedDUR2,TK_NotStart,JF721.574,Weld Outer Horizontal Seam between Shell Course # 3 & 4,6942,40,0,48,0,1040,1040,48,480,0,480,,,,2013-02-05 15:00,2013-02-11 08:00,,2013-02-01 12:30,2013-02-06 13:00,2013-02-01 12:30,2013-02-06 13:00,2013-02-01 12:30,2013-02-06 13:00,2013-02-05 15:00,2013-02-11 08:00,,PT_Normal,,,,,qENDbSDdNEG289Q+RH2G/g,a4866ZCB9k6LY3zXWAxauA,,,N,0,0,,,2013-11-05 11:09,2013-11-05 11:09,admin,admin,
623,102340,4512,26219,6590,0,N,N,N,CP_Drtn,TT_Task,DT_FixedDUR2,TK_NotStart,JF721.575,"""""Backgouge & NDT Inside Horizontal Seam between Shell Course# 3 & 4""""",6942,40,0,32,0,520,520,32,240,0,240,,,,2013-02-06 13:00,2013-02-10 10:00,,2013-02-02 13:00,2013-02-05 15:00,2013-02-02 13:00,2013-02-05 15:00,2013-02-02 13:00,2013-02-05 15:00,2013-02-06 13:00,2013-02-10 10:00,,PT_Normal,,,,,SoazNWSn8kuHw3pdLqHUtA,oDIcQgrhIE2BT2X6ZhNrdw,,,N,0,0,,,2013-11-05 11:09,2013-11-05 11:09,admin,admin,
624,102341,4512,26219,6590,0,N,N,N,CP_Drtn,TT_Task,DT_FixedDUR2,TK_NotStart,JF721.576,"Weld Inner Horizontal Seam between Shell Course # 3 & 4""""",6942,40,0,32,0,540,540,32,240,0,240,,,,2013-02-07 11:00,2013-02-11 08:00,,2013-02-03 11:00,2013-02-06 13:00,2013-02-03 11:00,2013-02-06 13:00,2013-02-03 11:00,2013-02-06 13:00,2013-02-07 11:00,2013-02-11 08:00,,PT_Normal,,,,,6xWfiEDAVEympbS4hQzTGw,IlZcypqrkkiT7vWvdYTU7Q,,,N,0,0,,,2013-11-05 11:09,2013-11-05 11:09,admin,admin,
625,102342,4512,26219,6590,0,N,N,N,CP_Drtn,TT_Task,DT_FixedDUR2,TK_NotStart,JF721.577,"Fit, Weld Shell Course # 1 Annular Plate & Oil Test",6964,216,176,64,0,1500,1500,64,720,0,720,,,,2013-01-29 16:00,2013-02-05 15:00,,2013-01-07 13:00,2013-01-14 12:00,2013-01-07 13:00,2013-01-14 12:00,2013-01-07 13:00,2013-01-14 12:00,2013-01-29 16:00,2013-02-05 15:00,,PT_Normal,,,,,m9oULxKNSESCt9aQDyOyeQ,Hd3Cw6x4qkutEzo1wLhJHQ,,,N,0,0,,,2013-11-05 11:09,2013-11-05 11:09,admin,admin,
626,102343,4512,26220,6590,0,N,N,N,CP_Drtn,TT_Task,DT_FixedDUR2,TK_NotStart,JF721.578,Erect & Tack Curve Angle,6942,40,0,32,0,520,520,32,240,0,240,,,,2013-02-11 08:00,2013-02-14 10:00,,2013-02-06 13:00,2013-02-10 10:00,2013-02-06 13:00,2013-02-10 10:00,2013-02-06 13:00,2013-02-10 10:00,2013-02-11 08:00,2013-02-14 10:00,,PT_Normal,,,,,+tJSxHSWRkWWGJZoTyGv7A,4LEEoOCuY0O9LxelhKylNA,,,N,0,0,,,2013-11-05 11:09,2013-11-05 11:09,admin,admin,
627,102344,4512,26220,6590,0,N,N,N,CP_Drtn,TT_Task,DT_FixedDUR2,TK_NotStart,JF721.579,Weld Curve Angle,6942,40,0,48,0,920,920,48,360,0,360,,,,2013-02-14 10:00,2013-02-19 13:00,,2013-02-10 10:00,2013-02-15 10:30,2013-02-10 10:00,2013-02-15 10:30,2013-02-10 10:00,2013-02-15 10:30,2013-02-14 10:00,2013-02-19 13:00,,PT_Normal,,,,,SZ8pWJFPjUeRlEAsr7FJig,mDvr2ryoH02BSTFTlZLUXg,,,N,0,0,,,2013-11-05 11:09,2013-11-05 11:09,admin,admin,
628,102345,4512,26221,6590,0,N,N,N,CP_Drtn,TT_Task,DT_FixedDUR2,TK_NotStart,JF721.580,MArk & Cut Holes,6964,40,0,40,0,660,660,40,270,0,270,,,,2013-02-14 10:00,2013-02-18 15:00,,2013-02-10 10:00,2013-02-14 10:00,2013-02-10 10:00,2013-02-14 10:00,2013-02-10 10:00,2013-02-14 10:00,2013-02-14 10:00,2013-02-18 15:00,,PT_Normal,,,,,fq+sh3RbS0CRPcc4t41EVw,KIGGf/WnD0ed22oKzp2sxw,,,N,0,0,,,2013-11-05 11:09,2013-11-05 11:09,admin,admin,
629,102346,4512,26221,6590,0,N,N,N,CP_Drtn,TT_Task,DT_FixedDUR2,TK_NotStart,JF721.581,"Fit & Tack Manholes ,Nozzles on Shell",6958,40,0,32,0,440,440,32,140,0,140,,,,2013-02-15 10:30,2013-02-18 15:00,,2013-02-11 08:00,2013-02-14 10:00,2013-02-11 08:00,2013-02-14 10:00,2013-02-11 08:00,2013-02-14 10:00,2013-02-15 10:30,2013-02-18 15:00,,PT_Normal,,,,,r65E3t3gdkuV3+fAI5Z/Ng,rBcnUlW/60y/LAaEBzsSMw,,,N,0,0,,,2013-11-05 11:09,2013-11-05 11:09,admin,admin,
630,102347,4512,26221,6590,0,N,N,N,CP_Drtn,TT_Task,DT_FixedDUR2,TK_NotStart,JF721.582,Weld MAnholes & Nozzles on shell,6968,40,0,56,0,1100,1100,56,400,0,400,,,,2013-02-16 11:00,2013-02-21 17:00,,2013-02-11 16:00,2013-02-17 17:00,2013-02-11 16:00,2013-02-17 17:00,2013-02-11 16:00,2013-02-17 17:00,2013-02-16 11:00,2013-02-21 17:00,,PT_Normal,,,,,a1idx+P2V0yetfpZIIga5g,0KCSGwJNKU+tT+/YmtgeGA,,,N,0,0,,,2013-11-05 11:09,2013-11-05 11:09,admin,admin,
631,102348,4512,26221,6590,0,N,N,N,CP_Drtn,TT_Task,DT_FixedDUR2,TK_NotStart,JF721.583,NDT on Manholes & Nozzles on shell,6966,40,0,24,0,220,220,24,80,0,80,,,,2013-02-22 09:30,2013-02-24 16:00,,2013-02-18 07:00,2013-02-20 11:00,2013-02-18 07:00,2013-02-20 11:00,2013-02-18 07:00,2013-02-20 11:00,2013-02-22 09:30,2013-02-24 16:00,,PT_Normal,,,,,yywU2Dk88Um/E9jxb3FwPg,8EilY1U3706EfnCqsOoftw,,,N,0,0,,,2013-11-05 11:09,2013-11-05 11:09,admin,admin,
632,102349,4512,26222,6590,0,N,N,N,CP_Drtn,TT_Task,DT_FixedDUR2,TK_NotStart,JF721.584,Prepare Tank for Roof Contruction,6914,40,0,32,0,460,460,32,140,0,140,,,,2013-02-24 16:00,2013-02-28 08:00,,2013-02-20 11:00,2013-02-24 08:00,2013-02-20 11:00,2013-02-24 08:00,2013-02-20 11:00,2013-02-24 08:00,2013-02-24 16:00,2013-02-28 08:00,,PT_Normal,,,,,ADkJ9HtjdUCCE8eGtn0sJQ,lRS00tchZkqxfqnwTzxvGA,,,N,0,0,,,2013-11-05 11:09,2013-11-05 11:09,admin,admin,
633,102350,4512,26222,6590,0,N,N,N,CP_Drtn,TT_Task,DT_FixedDUR2,TK_NotStart,JF721.585,Install Shoe Support Structure on Shell,6964,40,0,64,0,1400,1400,64,420,0,420,,,,2013-02-28 08:00,2013-03-06 17:00,,2013-02-24 08:00,2013-03-02 17:00,2013-02-24 08:00,2013-03-02 17:00,2013-02-24 08:00,2013-03-02 17:00,2013-02-28 08:00,2013-03-06 17:00,,PT_Normal,,,,,3GnQo/HGuEW9irArrjbCGg,PbQ/co29dU+izHYm3twr6w,,,N,0,0,,,2013-11-05 11:09,2013-11-05 11:09,admin,admin,
634,102351,4512,26222,6590,0,N,N,N,CP_Drtn,TT_Task,DT_FixedDUR2,TK_NotStart,JF721.586,Install / Assemble Roof Rafters,6951,40,0,160,0,4400,4400,160,1600,0,1600,,,,2013-03-07 07:00,2013-03-24 12:00,,2013-03-03 07:00,2013-03-19 17:00,2013-03-03 07:00,2013-03-19 17:00,2013-03-03 07:00,2013-03-19 17:00,2013-03-07 07:00,2013-03-24 12:00,,PT_Normal,,,,,mcA9KamzMEqGqi1Vdi+3xA,iIFBqAUwnkSEFCiOSVgkJQ,,,N,0,0,,,2013-11-05 11:09,2013-11-05 11:09,admin,admin,
635,102352,4512,26222,6590,0,N,N,N,CP_Drtn,TT_Task,DT_FixedDUR2,TK_NotStart,JF721.587,Installation of Roof Plates,6914,40,0,120,0,3600,3600,120,1050,0,1050,,,,2013-03-24 12:00,2013-04-06 12:00,,2013-03-20 07:00,2013-04-01 17:00,2013-03-20 07:00,2013-04-01 17:00,2013-03-20 07:00,2013-04-01 17:00,2013-03-24 12:00,2013-04-06 12:00,,PT_Normal,,,,,iQlhMGk670yy3wIUaaDQ/A,AzMvPn6voEGP9yR3lyt++Q,,,N,0,0,,,2013-11-05 11:09,2013-11-05 11:09,admin,admin,
636,102353,4512,26222,6590,0,N,N,N,CP_Drtn,TT_Task,DT_FixedDUR2,TK_NotStart,JF721.588,Install Roof Manholes & Nozzles,6942,40,0,48,0,680,680,48,200,0,200,,,,2013-04-06 12:00,2013-04-11 10:00,,2013-04-02 07:00,2013-04-07 10:00,2013-04-02 07:00,2013-04-07 10:00,2013-04-02 07:00,2013-04-07 10:00,2013-04-06 12:00,2013-04-11 10:00,,PT_Normal,,,,,hoQw5ZeWfk2GjHjvAoipoQ,XyLBxpvVO02nLeXXA/6jWA,,,N,0,0,,,2013-11-05 11:09,2013-11-05 11:09,admin,admin,
637,102354,4512,26223,6590,0,N,N,N,CP_Drtn,TT_Task,DT_FixedDUR2,TK_NotStart,JF721.589,"Erect & Fix Stairs, Handrails & Platforms on Shell",6942,40,0,40,0,550,550,40,120,0,120,,,,2013-04-11 10:00,2013-04-15 15:00,,2013-04-07 10:00,2013-04-11 10:00,2013-04-07 10:00,2013-04-11 10:00,2013-04-07 10:00,2013-04-11 10:00,2013-04-11 10:00,2013-04-15 15:00,,PT_Normal,,,,,+Rjh1RE6xEehJIFym5m3Bw,5EyPUwMeTEmEfhHgV6rOaQ,,,N,0,0,,,2013-11-05 11:09,2013-11-05 11:09,admin,admin,
638,102355,4512,26223,6590,0,N,N,N,CP_Drtn,TT_Task,DT_FixedDUR2,TK_NotStart,JF721.590,Erect & Fix Roof Platforms & Handrails,6942,40,0,40,0,510,510,40,150,0,150,,,,2013-04-15 15:00,2013-04-20 10:00,,2013-04-11 10:00,2013-04-15 15:00,2013-04-11 10:00,2013-04-15 15:00,2013-04-11 10:00,2013-04-15 15:00,2013-04-15 15:00,2013-04-20 10:00,,PT_Normal,,,,,9Z+HtuVij0ySo9+hvPZJdw,Lb5PVGvsWk2o3r/VbRiomA,,,N,0,0,,,2013-11-05 11:09,2013-11-05 11:09,admin,admin,
639,102356,4512,26265,6590,0,N,N,N,CP_Drtn,TT_Task,DT_FixedDUR2,TK_NotStart,JF721.591,Install Blind Flanges,6965,40,0,8,0,120,120,8,50,0,50,,,,2013-04-20 10:00,2013-04-21 08:00,,2013-04-15 15:00,2013-04-16 13:00,2013-04-15 15:00,2013-04-16 13:00,2013-04-15 15:00,2013-04-16 13:00,2013-04-20 10:00,2013-04-21 08:00,,PT_Normal,,,,,Cxy+N37FjUCpU/AtEECxXA,bansJdM3X0yoUVEYaMB/xw,,,N,0,0,,,2013-11-05 11:09,2013-11-05 11:09,admin,admin,
640,102357,4512,26265,6590,0,N,N,N,CP_Drtn,TT_Task,DT_FixedDUR2,TK_NotStart,JF721.592,Tank Water Filling,6965,40,0,184,0,1840,1840,184,920,0,920,,,,2013-04-21 08:00,2013-05-10 14:30,,2013-04-16 13:00,2013-05-06 12:00,2013-04-16 13:00,2013-05-06 12:00,2013-04-16 13:00,2013-05-06 12:00,2013-04-21 08:00,2013-05-10 14:30,,PT_Normal,,,,,91FakrD0AUOS/tJ5r+/uDQ,Kh4mzvRJ7U6puAbF5H7xpQ,,,N,0,0,,,2013-11-05 11:09,2013-11-05 11:09,admin,admin,
641,102358,4512,26265,6590,0,N,N,N,CP_Drtn,TT_Task,DT_FixedDUR2,TK_NotStart,JF721.593,Hold Water for 48 Hours,6965,40,0,16,0,200,200,16,40,0,40,,,,2013-05-11 07:00,2013-05-12 13:00,,2013-05-06 12:00,2013-05-08 08:00,2013-05-06 12:00,2013-05-08 08:00,2013-05-06 12:00,2013-05-08 08:00,2013-05-11 07:00,2013-05-12 13:00,,PT_Normal,,,,,8uLxZhzXqUO6u9ifLwFQNA,Hztw/9W0LUmVyvntp0hYYQ,,,N,0,0,,,2013-11-05 11:09,2013-11-05 11:09,admin,admin,
642,102359,4512,26265,6590,0,N,N,N,CP_Drtn,TT_Task,DT_FixedDUR2,TK_NotStart,JF721.594,Drain Water from Tank,6965,96,0,96,0,1200,1200,96,480,0,480,,,,2013-05-18 14:00,2013-05-28 15:00,,2013-05-08 08:00,2013-05-18 14:00,2013-05-08 08:00,2013-05-18 14:00,2013-05-08 08:00,2013-05-18 14:00,2013-05-18 14:00,2013-05-28 15:00,,PT_Normal,,,,,XRitIb/gsEWeymiUs49S6A,TICNOBkmHEGq2yaXZRVaLA,,,N,0,0,,,2013-11-05 11:09,2013-11-05 11:09,admin,admin,
643,102360,4512,26265,6590,0,N,N,N,CP_Drtn,TT_Task,DT_FixedDUR2,TK_NotStart,JF721.595,Clean & Dry Out Tank,6942,96,0,16,0,180,180,16,80,0,80,,,,2013-05-28 15:00,2013-05-30 11:00,,2013-05-18 14:00,2013-05-20 10:00,2013-05-18 14:00,2013-05-20 10:00,2013-05-18 14:00,2013-05-20 10:00,2013-05-28 15:00,2013-05-30 11:00,,PT_Normal,,,,,XKGkvFxNEUeWBdhMvyNPDg,U7W2RDXctU2pKuHyUnEDrg,,,N,0,0,,,2013-11-05 11:09,2013-11-05 11:09,admin,admin,
644,102361,4512,26225,6590,0,N,N,N,CP_Drtn,TT_Task,DT_FixedDUR2,TK_NotStart,JF721.596,Erect Scafolding Outside Tank,6942,40,0,80,0,960,960,80,240,0,240,,,,2013-05-12 13:00,2013-05-21 08:00,,2013-05-08 08:00,2013-05-16 13:00,2013-05-08 08:00,2013-05-16 13:00,2013-05-08 08:00,2013-05-16 13:00,2013-05-12 13:00,2013-05-21 08:00,,PT_Normal,,,,,zMm8hIGSvEGS5nNtKpHJvA,NX0HJySfA0ee8dax3nEcVw,,,N,0,0,,,2013-11-05 11:09,2013-11-05 11:09,admin,admin,
645,102362,4512,26225,6590,0,N,N,N,CP_Drtn,TT_Task,DT_FixedDUR2,TK_NotStart,JF721.597,External Shell Blast & Prime,6950,40,0,48,0,560,560,48,120,0,120,,,,2013-05-21 08:00,2013-05-26 11:00,,2013-05-16 13:00,2013-05-21 16:00,2013-05-16 13:00,2013-05-21 16:00,2013-05-16 13:00,2013-05-21 16:00,2013-05-21 08:00,2013-05-26 11:00,,PT_Normal,,,,,SOs9hVhqdU2kthj5H/1RTA,pmfMQhFbCk2DnuEWFOOGgw,,,N,0,0,,,2013-11-05 11:09,2013-11-05 11:09,admin,admin,
646,102363,4512,26225,6590,0,N,N,N,CP_Drtn,TT_Task,DT_FixedDUR2,TK_NotStart,JF721.598,External Shell Secondary & Final Coat,6965,40,0,48,0,560,560,48,160,0,160,,,,2013-05-21 16:00,2013-05-27 09:00,,2013-05-17 13:30,2013-05-22 14:00,2013-05-17 13:30,2013-05-22 14:00,2013-05-17 13:30,2013-05-22 14:00,2013-05-21 16:00,2013-05-27 09:00,,PT_Normal,,,,,Ym+1yIvbYk6ZdOTh+Kc2vg,LrXrl8VuZUKaDkTnCorn2w,,,N,0,0,,,2013-11-05 11:09,2013-11-05 11:09,admin,admin,
647,102364,4512,26225,6590,0,N,N,N,CP_Drtn,TT_Task,DT_FixedDUR2,TK_NotStart,JF721.599,External Shell Paint Inspection,6935,40,0,24,0,100,100,24,30,0,30,,,,2013-05-27 09:00,2013-05-29 13:00,,2013-05-22 14:00,2013-05-25 13:00,2013-05-22 14:00,2013-05-25 13:00,2013-05-22 14:00,2013-05-25 13:00,2013-05-27 09:00,2013-05-29 13:00,,PT_Normal,,,,,jhMIz6lOaEmO9/9p8tEENQ,zNCSE9hsPU+w0PbWL4y0RQ,,,N,0,0,,,2013-11-05 11:09,2013-11-05 11:09,admin,admin,
648,102365,4512,26225,6590,0,N,N,N,CP_Drtn,TT_Task,DT_FixedDUR2,TK_NotStart,JF721.600,Dismantle External Scaffolding,6957,40,0,32,0,260,260,32,60,0,60,,,,2013-05-29 13:00,2013-06-02 10:00,,2013-05-25 13:00,2013-05-28 15:00,2013-05-25 13:00,2013-05-28 15:00,2013-05-25 13:00,2013-05-28 15:00,2013-05-29 13:00,2013-06-02 10:00,,PT_Normal,,,,,P25W8N+oSE+sfZIbix2yfQ,h8ZTaHGim0WHe47851X01g,,,N,0,0,,,2013-11-05 11:09,2013-11-05 11:09,admin,admin,
649,102366,4512,26226,6590,0,N,N,N,CP_Drtn,TT_Task,DT_FixedDUR2,TK_NotStart,JF721.601,Erect Scafolding Inside Tank,6942,96,56,64,0,720,720,64,240,0,240,,,,2013-05-30 11:00,2013-06-06 10:00,,2013-05-20 10:00,2013-05-27 09:00,2013-05-20 10:00,2013-05-27 09:00,2013-05-20 10:00,2013-05-27 09:00,2013-05-30 11:00,2013-06-06 10:00,,PT_Normal,,,,,n4O8SZ7aKk234QMW7DPw3w,vidy906DS0uiEq9Jcg/PUg,,,N,0,0,,,2013-11-05 11:09,2013-11-05 11:09,admin,admin,
650,102367,4512,26226,6590,0,N,N,N,CP_Drtn,TT_Task,DT_FixedDUR2,TK_NotStart,JF721.602,Internal Shell Blast & Prime,6949,40,0,40,0,420,420,40,120,0,120,,,,2013-06-02 10:00,2013-06-06 10:00,,2013-05-28 15:00,2013-06-02 10:00,2013-05-28 15:00,2013-06-02 10:00,2013-05-28 15:00,2013-06-02 10:00,2013-06-02 10:00,2013-06-06 10:00,,PT_Normal,,,,,BIzg3EC6hEiyOobJ4Zha+w,EcDxdvHaBEGzZrj34KuDLw,,,N,0,0,,,2013-11-05 11:09,2013-11-05 11:09,admin,admin,
651,102368,4512,26226,6590,0,N,N,N,CP_Drtn,TT_Task,DT_FixedDUR2,TK_NotStart,JF721.603,Internal Shell Secondary & Final Coat,6950,40,0,40,0,420,420,40,120,0,120,,,,2013-06-06 10:00,2013-06-10 15:00,,2013-06-02 10:00,2013-06-06 10:00,2013-06-02 10:00,2013-06-06 10:00,2013-06-02 10:00,2013-06-06 10:00,2013-06-06 10:00,2013-06-10 15:00,,PT_Normal,,,,,hNtqvXyD30K0rR57aVwG3A,wZGqCHL8t0WnxIy/M/19Uw,,,N,0,0,,,2013-11-05 11:09,2013-11-05 11:09,admin,admin,
652,102369,4512,26226,6590,0,N,N,N,CP_Drtn,TT_Task,DT_FixedDUR2,TK_NotStart,JF721.604,Internal Shell Paint Inspection,6966,40,0,24,0,110,110,24,30,0,30,,,,2013-06-06 10:00,2013-06-09 09:00,,2013-06-02 10:00,2013-06-04 14:00,2013-06-02 10:00,2013-06-04 14:00,2013-06-02 10:00,2013-06-04 14:00,2013-06-06 10:00,2013-06-09 09:00,,PT_Normal,,,,,hNRe3217C02foxndSexgfA,y9fO7Scg7E+e7C945Imudw,,,N,0,0,,,2013-11-05 11:09,2013-11-05 11:09,admin,admin,
653,102370,4512,26226,6590,0,N,N,N,CP_Drtn,TT_Task,DT_FixedDUR2,TK_NotStart,JF721.605,Dismantle Internal Scaffolding,6942,40,0,48,0,520,520,48,160,0,160,,,,2013-06-09 09:00,2013-06-13 17:00,,2013-06-04 14:00,2013-06-09 17:00,2013-06-04 14:00,2013-06-09 17:00,2013-06-04 14:00,2013-06-09 17:00,2013-06-09 09:00,2013-06-13 17:00,,PT_Normal,,,,,yRLriQYcI0CiBMjl9LLjBQ,yu9LhqdEMkmwT1t857x5Tw,,,N,0,0,,,2013-11-05 11:09,2013-11-05 11:09,admin,admin,
654,102371,4512,26226,6590,0,N,N,N,CP_Drtn,TT_Task,DT_FixedDUR2,TK_NotStart,JF721.606,Bottom/Annular Plate Blast & Prime,6949,40,0,32,0,260,260,32,80,0,80,,,,2013-06-14 09:30,2013-06-17 14:00,,2013-06-10 07:00,2013-06-13 09:00,2013-06-10 07:00,2013-06-13 09:00,2013-06-10 07:00,2013-06-13 09:00,2013-06-14 09:30,2013-06-17 14:00,,PT_Normal,,,,,gf9DfPqsqECd22vuQCsYaQ,DbN3WnOHDECoEhhms9W2Yg,,,N,0,0,,,2013-11-05 11:09,2013-11-05 11:09,admin,admin,
655,102372,4512,26226,6590,0,N,N,N,CP_Drtn,TT_Task,DT_FixedDUR2,TK_NotStart,JF721.607,Bottom/Annular Plate Secondary & Final Coat,6950,40,0,32,0,260,260,32,80,0,80,,,,2013-06-17 14:00,2013-06-20 16:00,,2013-06-13 09:00,2013-06-16 16:00,2013-06-13 09:00,2013-06-16 16:00,2013-06-13 09:00,2013-06-16 16:00,2013-06-17 14:00,2013-06-20 16:00,,PT_Normal,,,,,PYKavwAAVkaVW0xBDeWIEQ,5jQfhNzf/Uq3OARytNb6qw,,,N,0,0,,,2013-11-05 11:09,2013-11-05 11:09,admin,admin,
656,102373,4512,26226,6590,0,N,N,N,CP_Drtn,TT_Task,DT_FixedDUR2,TK_NotStart,JF721.608,Bottom/Annular Plate Paint Inspection,6942,40,0,24,0,150,150,24,40,0,40,,,,2013-06-20 16:00,2013-06-23 15:00,,2013-06-16 16:00,2013-06-19 10:00,2013-06-16 16:00,2013-06-19 10:00,2013-06-16 16:00,2013-06-19 10:00,2013-06-20 16:00,2013-06-23 15:00,,PT_Normal,,,,,ovM+u7s3nkea1DMjkln5rQ,t2L8aWgy5kSdkuqtYptyaw,,,N,0,0,,,2013-11-05 11:09,2013-11-05 11:09,admin,admin,
657,102374,4512,26227,6590,0,N,N,N,CP_Drtn,TT_Task,DT_FixedDUR2,TK_NotStart,JF721.609,Tanks lighting,6942,40,0,16,0,220,220,16,60,0,60,,,,2013-07-26 11:30,2013-07-28 10:00,,2013-07-22 09:00,2013-07-23 15:00,2013-07-22 09:00,2013-07-23 15:00,2013-07-22 09:00,2013-07-23 15:00,2013-07-26 11:30,2013-07-28 10:00,,PT_Normal,,,,,15MGHtz9r0uklyBTOrYfDg,7y5Qe1s210qmT+OEF38g9A,,,N,0,0,,,2013-11-05 11:09,2013-11-05 11:09,admin,admin,
658,102375,4512,26227,6590,0,N,N,N,CP_Drtn,TT_Task,DT_FixedDUR2,TK_NotStart,JF721.610,Tanks lighting  protection,6942,40,0,16,0,220,220,16,80,0,80,,,,2013-07-28 10:00,2013-07-29 16:00,,2013-07-23 15:00,2013-07-25 11:00,2013-07-23 15:00,2013-07-25 11:00,2013-07-23 15:00,2013-07-25 11:00,2013-07-28 10:00,2013-07-29 16:00,,PT_Normal,,,,,cWiYtoHtmk+PKNLFnxvryA,DDo+Xv7R+k66PRF1lFqpDQ,,,N,0,0,,,2013-11-05 11:09,2013-11-05 11:09,admin,admin,
659,102376,4512,26227,6590,0,N,N,N,CP_Drtn,TT_Task,DT_FixedDUR2,TK_NotStart,JF721.611,Grounding system,6942,40,0,16,0,200,200,16,60,0,60,,,,2013-07-29 16:00,2013-07-31 12:00,,2013-07-25 11:00,2013-07-27 12:00,2013-07-25 11:00,2013-07-27 12:00,2013-07-25 11:00,2013-07-27 12:00,2013-07-29 16:00,2013-07-31 12:00,,PT_Normal,,,,,E/So95UC4U+xz4eouvWu2A,AdBUkj8+oEi0Eo2JeQDOPQ,,,N,0,0,,,2013-11-05 11:09,2013-11-05 11:09,admin,admin,
660,102377,4512,26228,6590,0,N,N,N,CP_Drtn,TT_Task,DT_FixedDUR2,TK_NotStart,JF721.612,Concrete testing,6916,40,0,24,0,270,270,24,90,0,90,,,,2013-07-31 12:00,2013-08-03 11:00,,2013-07-27 12:00,2013-07-29 16:00,2013-07-27 12:00,2013-07-29 16:00,2013-07-27 12:00,2013-07-29 16:00,2013-07-31 12:00,2013-08-03 11:00,,PT_Normal,,,,,09Uv8Vqt7Eq9mz0tdJelKQ,6ft2cTrvvkS3JbzQ3DAeBg,,,N,0,0,,,2013-11-05 11:09,2013-11-05 11:09,admin,admin,
661,102378,4512,26228,6590,0,N,N,N,CP_Drtn,TT_Task,DT_FixedDUR2,TK_NotStart,JF721.613,RT testing for the welding,6942,40,0,24,0,270,270,24,120,0,120,,,,2013-08-03 11:00,2013-08-05 15:00,,2013-07-29 16:00,2013-08-01 10:00,2013-07-29 16:00,2013-08-01 10:00,2013-07-29 16:00,2013-08-01 10:00,2013-08-03 11:00,2013-08-05 15:00,,PT_Normal,,,,,Q0zuy0w10k61KMYjBnd8Pg,Bc+toI8VmUGsp2SonmfYsg,,,N,0,0,,,2013-11-05 11:09,2013-11-05 11:09,admin,admin,
662,102379,4512,26228,6590,0,N,N,N,CP_Drtn,TT_Task,DT_FixedDUR2,TK_NotStart,JF721.614,Sand testing,6915,40,0,32,0,360,360,32,160,0,160,,,,2013-08-05 15:00,2013-08-08 17:00,,2013-08-01 10:00,2013-08-04 17:00,2013-08-01 10:00,2013-08-04 17:00,2013-08-01 10:00,2013-08-04 17:00,2013-08-05 15:00,2013-08-08 17:00,,PT_Normal,,,,,5dcYajNbCEeiCSppfxDxXA,cFr8gK331kqMvYV03T5dHA,,,N,0,0,,,2013-11-05 11:09,2013-11-05 11:09,admin,admin,
663,102380,4512,26228,6590,0,N,N,N,CP_Drtn,TT_Task,DT_FixedDUR2,TK_NotStart,JF721.615,Tank Calibration,6965,40,0,24,0,270,270,24,120,0,120,,,,2013-08-09 09:30,2013-08-11 16:00,,2013-08-05 07:00,2013-08-07 11:00,2013-08-05 07:00,2013-08-07 11:00,2013-08-05 07:00,2013-08-07 11:00,2013-08-09 09:30,2013-08-11 16:00,,PT_Normal,,,,,h/YZ+vqo80Wya0q78uh6yQ,x7QmKf7CPEeCne+hTwDCMA,,,N,0,0,,,2013-11-05 11:09,2013-11-05 11:09,admin,admin,
664,102381,4512,26229,6590,0,N,N,N,CP_Drtn,TT_Task,DT_FixedDUR2,TK_NotStart,JF721.616,FInal Inspection & Hand over to client,6915,40,0,24,0,270,270,24,120,0,120,,,,2013-08-11 16:00,2013-08-14 10:00,,2013-08-07 11:00,2013-08-10 10:00,2013-08-07 11:00,2013-08-10 10:00,2013-08-07 11:00,2013-08-10 10:00,2013-08-11 16:00,2013-08-14 10:00,,PT_Normal,,,,,roSHWzWnhU6fDQADJSn4zA,I9JlI74c8UyY7wb7nq2A5Q,,,N,0,0,,,2013-11-05 11:09,2013-11-05 11:09,admin,admin,
665,102382,4512,26230,6590,0,N,N,N,CP_Drtn,TT_Task,DT_FixedDUR2,TK_NotStart,JF721.536,Concrete Pouring,6980,40,0,24,0,140,140,24,30,0,30,,,,2012-10-31 11:00,2012-11-03 10:00,,2012-10-25 11:00,2012-10-29 15:00,2012-10-25 11:00,2012-10-29 15:00,2012-10-25 11:00,2012-10-29 15:00,2012-10-31 11:00,2012-11-03 10:00,,PT_Normal,,,,,VW7i4b1GyUOMGXujLgdOtw,IS4vCyzVkEaBdYQLzRNHwA,,,N,0,0,,,2013-11-05 11:09,2013-11-05 11:09,admin,admin,
666,102383,4512,26230,6590,0,N,N,N,CP_Drtn,TT_Task,DT_FixedDUR2,TK_NotStart,JF721.537,Concrete Curing,6965,40,0,24,0,450,450,24,90,0,90,,,,2012-11-03 10:00,2012-11-05 14:00,,2012-10-29 15:00,2012-11-01 09:00,2012-10-29 15:00,2012-11-01 09:00,2012-10-29 15:00,2012-11-01 09:00,2012-11-03 10:00,2012-11-05 14:00,,PT_Normal,,,,,TqgQ3cmqIEe/Yjy3PxROFA,1YEsaRCpGkWH2OpUJiN/cQ,,,N,0,0,,,2013-11-05 11:09,2013-11-05 11:09,admin,admin,
667,102384,4512,26230,6590,0,N,N,N,CP_Drtn,TT_Task,DT_FixedDUR2,TK_NotStart,JF721.538,Removal of Formworks,6935,40,0,16,0,280,280,16,60,0,60,,,,2012-11-05 14:00,2012-11-07 10:00,,2012-11-01 09:00,2012-11-03 10:00,2012-11-01 09:00,2012-11-03 10:00,2012-11-01 09:00,2012-11-03 10:00,2012-11-05 14:00,2012-11-07 10:00,,PT_Normal,,,,,5bIs+ZHrmkm6oZtN07n5pg,M6QYgC4jbUu+Pmc6mpXdDQ,,,N,0,0,,,2013-11-05 11:09,2013-11-05 11:09,admin,admin,
668,102385,4512,26230,6590,0,N,N,N,CP_Drtn,TT_Task,DT_FixedDUR2,TK_NotStart,JF721.539,Backfilling,6965,40,0,32,0,760,760,32,120,0,120,,,,2012-11-07 10:00,2012-11-10 17:00,,2012-11-03 10:00,2012-11-06 12:00,2012-11-03 10:00,2012-11-06 12:00,2012-11-03 10:00,2012-11-06 12:00,2012-11-07 10:00,2012-11-10 17:00,,PT_Normal,,,,,V89RRz6UOUmUGkDiVLSXSQ,3eyz/V5xikmiPeysCYtyww,,,N,0,0,,,2013-11-05 11:09,2013-11-05 11:09,admin,admin,
669,102386,4512,26272,6590,0,N,N,N,CP_Drtn,TT_FinMile,DT_FixedDrtn,TK_NotStart,4.7,Complete MOBILIZATION of camp with Catering and accommodation facilities,,40,0,0,0,0,0,0,0,0,0,,,,2012-10-09 09:00,2012-10-09 09:00,,2012-10-04 14:00,2012-10-04 14:00,2012-10-04 14:00,2012-10-04 14:00,2012-10-04 14:00,2012-10-04 14:00,2012-10-09 09:00,2012-10-09 09:00,,PT_Normal,,,,,pLrIEQ7ODkuZKAd35MabPg,,,,N,0,0,,,2013-11-05 11:09,2013-11-05 11:09,admin,admin,
670,102387,4512,26232,6590,0,N,N,N,CP_Drtn,TT_FinMile,DT_FixedDrtn,TK_NotStart,4.9,Complete COnstruction of Civil/Structural works,,40,0,0,0,0,0,0,0,0,0,,,,2012-11-10 17:00,2012-11-10 17:00,,2012-11-06 12:00,2012-11-06 12:00,2012-11-06 12:00,2012-11-06 12:00,2012-11-06 12:00,2012-11-06 12:00,2012-11-10 17:00,2012-11-10 17:00,,PT_Normal,,,,,hEdXPso7N0yVU4eYvUvlEQ,,,,N,0,0,,,2013-11-05 11:09,2013-11-05 11:09,admin,admin,
671,102388,4512,26233,6590,0,N,N,N,CP_Drtn,TT_FinMile,DT_FixedDrtn,TK_NotStart,2.D,MCC,,40,0,0,0,0,0,0,0,0,0,,,,2013-04-20 10:00,2013-04-20 10:00,,2013-04-15 15:00,2013-04-15 15:00,2013-04-15 15:00,2013-04-15 15:00,2013-04-15 15:00,2013-04-15 15:00,2013-04-20 10:00,2013-04-20 10:00,,PT_Normal,,,,,f6/+TQGWN0qv5luntnagOQ,,,,N,0,0,,,2013-11-05 11:09,2013-11-05 11:09,admin,admin,
672,102389,4512,26234,6590,0,N,N,N,CP_Drtn,TT_FinMile,DT_FixedDrtn,TK_NotStart,4.D,Final Testing,,96,0,0,0,0,0,0,0,0,0,,,,2013-05-30 11:00,2013-05-30 11:00,,2013-05-20 10:00,2013-05-20 10:00,2013-05-20 10:00,2013-05-20 10:00,2013-05-20 10:00,2013-05-20 10:00,2013-05-30 11:00,2013-05-30 11:00,,PT_Normal,,,,,a+48gJR9PE++rZvuBnZKbA,,,,N,0,0,,,2013-11-05 11:09,2013-11-05 11:09,admin,admin,
673,102390,4512,26235,6590,0,N,N,N,CP_Drtn,TT_FinMile,DT_FixedDrtn,TK_NotStart,4.10,Complete Installation,,40,0,0,0,0,0,0,0,0,0,,,,2013-07-31 12:00,2013-07-31 12:00,,2013-07-27 12:00,2013-07-27 12:00,2013-07-27 12:00,2013-07-27 12:00,2013-07-27 12:00,2013-07-27 12:00,2013-07-31 12:00,2013-07-31 12:00,,PT_Normal,,,,,ejz52pDfN0uSovfPskyqbw,,,,N,0,0,,,2013-11-05 11:09,2013-11-05 11:09,admin,admin,
674,102391,4512,26236,6590,0,N,N,N,CP_Drtn,TT_FinMile,DT_FixedDrtn,TK_NotStart,3.D,THird Party Testing,,40,0,0,0,0,0,0,0,0,0,,,,2013-08-11 16:00,2013-08-11 16:00,,2013-08-07 11:00,2013-08-07 11:00,2013-08-07 11:00,2013-08-07 11:00,2013-08-07 11:00,2013-08-07 11:00,2013-08-11 16:00,2013-08-11 16:00,,PT_Normal,,,,,leWt4bx0JkOfCavzSnkrfQ,,,,N,0,0,,,2013-11-05 11:09,2013-11-05 11:09,admin,admin,
675,102392,4512,26237,6590,0,N,N,N,CP_Drtn,TT_FinMile,DT_FixedDrtn,TK_NotStart,6.D,Project Completion,,40,40,0,0,0,0,0,0,0,0,,,,2013-08-14 10:00,2013-08-14 10:00,,2013-08-10 10:00,2013-08-10 10:00,2013-08-10 10:00,2013-08-10 10:00,2013-08-10 10:00,2013-08-10 10:00,2013-08-14 10:00,2013-08-14 10:00,,PT_Normal,,,,,2q2AtQqTIUykGTGz8Y0naQ,,,,N,0,0,,,2013-11-05 11:09,2013-11-05 11:09,admin,admin,
676,102393,4512,26240,6590,0,N,N,N,CP_Drtn,TT_Task,DT_FixedDUR2,TK_NotStart,JF721.683,Rental For Workers & Engineers Accomodation with Facilities,6915,0,0,16,0,40,40,16,20,0,20,,,,2012-07-31 13:00,2012-08-02 09:00,,2012-07-31 13:00,2012-08-02 09:00,2012-07-31 13:00,2012-08-02 09:00,2012-07-31 13:00,2012-08-02 09:00,2012-07-31 13:00,2012-08-02 09:00,,PT_Normal,,,,,xizJJN4VSEOYeijmQBCWCA,2Rc3PV34RUGdQOdfu2ixow,,,Y,0,0,,,2013-11-05 11:09,2013-11-05 11:09,admin,admin,
677,102394,4512,26240,6590,0,N,N,N,CP_Drtn,TT_Task,DT_FixedDUR2,TK_NotStart,JF721.685,Ma'aden Inspection & Approval for Portacabins,6915,0,0,8,0,90,90,8,40,0,40,,,,2012-10-03 16:00,2012-10-04 14:00,,2012-10-03 16:00,2012-10-04 14:00,2012-10-03 16:00,2012-10-04 14:00,2012-10-03 16:00,2012-10-04 14:00,2012-10-03 16:00,2012-10-04 14:00,,PT_Normal,,,,,cg+Vgw+G/kOsoo0NtEt5Ug,a1G97IqQG0+dlGprkAwg6w,,,Y,0,0,,,2013-11-05 11:09,2013-11-05 11:09,admin,admin,
678,102395,4512,26240,6590,0,N,N,N,CP_Drtn,TT_Task,DT_FixedDUR2,TK_NotStart,JF721.684,Complete Mobilize AZ Equipment to Site & Prepare the site fabrication yard,6915,0,0,552,0,6210,6210,552,2070,0,2070,,,,2012-08-02 09:00,2012-10-03 16:00,,2012-08-02 09:00,2012-10-03 16:00,2012-08-02 09:00,2012-10-03 16:00,2012-08-02 09:00,2012-10-03 16:00,2012-08-02 09:00,2012-10-03 16:00,,PT_Normal,,,,,0j+VtA8ljUySDG9pCXy6rQ,fT50ib2b5028oMgSJijUig,,,Y,0,0,,,2013-11-05 11:09,2013-11-05 11:09,admin,admin,
679,102396,4512,26241,6590,0,N,N,N,CP_Drtn,TT_Task,DT_FixedDUR2,TK_NotStart,JF721.686,Layout/Stake-out,6942,0,0,32,0,520,520,32,160,0,160,,,,2012-10-04 14:00,2012-10-08 11:00,,2012-10-04 14:00,2012-10-08 11:00,2012-10-04 14:00,2012-10-08 11:00,2012-10-04 14:00,2012-10-08 11:00,2012-10-04 14:00,2012-10-08 11:00,,PT_Normal,,,,,G1yPE84BeEGcNgS//R0HDw,8aEH3T4ZUEGZEaLuWt5WQQ,,,Y,0,0,,,2013-11-05 11:09,2013-11-05 11:09,admin,admin,
680,102397,4512,26241,6590,0,N,N,N,CP_Drtn,TT_Task,DT_FixedDUR2,TK_NotStart,JF721.687,Excavation,6942,0,0,72,0,990,990,72,450,0,450,,,,2012-10-08 11:00,2012-10-16 08:00,,2012-10-08 11:00,2012-10-16 08:00,2012-10-08 11:00,2012-10-16 08:00,2012-10-08 11:00,2012-10-16 08:00,2012-10-08 11:00,2012-10-16 08:00,,PT_Normal,,,,,Ax+b+jcfFkmT5H0q/xlssw,giC/6fOIbkG47z03K6t19Q,,,Y,0,0,,,2013-11-05 11:09,2013-11-05 11:09,admin,admin,
681,102398,4512,26241,6590,0,N,N,N,CP_Drtn,TT_Task,DT_FixedDUR2,TK_NotStart,JF721.688,SteelWorks/Formworks,6980,0,0,64,0,1120,1120,64,320,0,320,,,,2012-10-16 08:00,2012-10-22 17:00,,2012-10-16 08:00,2012-10-22 17:00,2012-10-16 08:00,2012-10-22 17:00,2012-10-16 08:00,2012-10-22 17:00,2012-10-16 08:00,2012-10-22 17:00,,PT_Normal,,,,,OCp4XMxZGkqrTIOIo7J1AQ,ehYEnHImd0SuSM6egEBNwg,,,Y,0,0,,,2013-11-05 11:09,2013-11-05 11:09,admin,admin,
682,102399,4512,26241,6590,0,N,N,N,CP_Drtn,TT_Task,DT_FixedDUR2,TK_NotStart,JF721.689,Soil Compaction,6965,0,0,56,0,840,840,56,350,0,350,,,,2012-10-23 07:00,2012-10-30 13:00,,2012-10-23 07:00,2012-10-30 13:00,2012-10-23 07:00,2012-10-30 13:00,2012-10-23 07:00,2012-10-30 13:00,2012-10-23 07:00,2012-10-30 13:00,,PT_Normal,,,,,KOTXFQgJ50KtiAbMpv15Tw,NliwUuV3RUKP0Chxh0sJTw,,,Y,0,0,,,2013-11-05 11:09,2013-11-05 11:09,admin,admin,
683,102400,4512,26242,6590,0,N,N,N,CP_Drtn,TT_Task,DT_FixedDUR2,TK_NotStart,JF721.690,Concrete Pouring,6928,0,0,24,0,390,390,24,98,0,98,,,,2012-10-30 13:00,2012-11-01 17:00,,2012-10-30 13:00,2012-11-01 17:00,2012-10-30 13:00,2012-11-01 17:00,2012-10-30 13:00,2012-11-01 17:00,2012-10-30 13:00,2012-11-01 17:00,,PT_Normal,,,,,H4v+xxZjAUSrULfL5jjHcA,lgBZInqCA0iktTS9L5HPoQ,,,Y,0,0,,,2013-11-05 11:09,2013-11-05 11:09,admin,admin,
684,102401,4512,26242,6590,0,N,N,N,CP_Drtn,TT_Task,DT_FixedDUR2,TK_NotStart,JF721.691,Concrete Curing,6965,0,0,56,0,980,980,56,280,0,280,,,,2012-11-02 09:30,2012-11-08 08:00,,2012-11-02 09:30,2012-11-08 08:00,2012-11-02 09:30,2012-11-08 08:00,2012-11-02 09:30,2012-11-08 08:00,2012-11-02 09:30,2012-11-08 08:00,,PT_Normal,,,,,NYP5XT7qLUC7ZRkrXTmfdg,HwZ5gvACMke9z3M1AWDl6Q,,,Y,0,0,,,2013-11-05 11:09,2013-11-05 11:09,admin,admin,
685,102402,4512,26242,6590,0,N,N,N,CP_Drtn,TT_Task,DT_FixedDUR2,TK_NotStart,JF721.692,Removal of Formworks,6980,0,0,40,0,650,650,40,150,0,150,,,,2012-11-08 08:00,2012-11-12 13:00,,2012-11-08 08:00,2012-11-12 13:00,2012-11-08 08:00,2012-11-12 13:00,2012-11-08 08:00,2012-11-12 13:00,2012-11-08 08:00,2012-11-12 13:00,,PT_Normal,,,,,WVDtITvvw0Wj7N/M3o+eOw,7CvuZEXklUyMbCMVegVyGQ,,,Y,0,0,,,2013-11-05 11:09,2013-11-05 11:09,admin,admin,
686,102403,4512,26242,6590,0,N,N,N,CP_Drtn,TT_Task,DT_FixedDUR2,TK_NotStart,JF721.693,Backfilling,6965,0,0,72,0,1080,1080,72,450,0,450,,,,2012-11-12 13:00,2012-11-20 10:00,,2012-11-12 13:00,2012-11-20 10:00,2012-11-12 13:00,2012-11-20 10:00,2012-11-12 13:00,2012-11-20 10:00,2012-11-12 13:00,2012-11-20 10:00,,PT_Normal,,,,,6WbarnyOEEKWh74HreB91g,SuAsiSfHu0u0dHyOBognAA,,,Y,0,0,,,2013-11-05 11:09,2013-11-05 11:09,admin,admin,
687,102404,4512,26243,6590,0,N,N,N,CP_Drtn,TT_Task,DT_FixedDUR2,TK_NotStart,JF721.694,Erect & Weld Annular Plates,6942,0,0,120,0,1400,1400,120,490,0,490,,,,2012-11-20 10:00,2012-12-03 10:00,,2012-11-20 10:00,2012-12-03 10:00,2012-11-20 10:00,2012-12-03 10:00,2012-11-20 10:00,2012-12-03 10:00,2012-11-20 10:00,2012-12-03 10:00,,PT_Normal,,,,,MjMEz8m5OkyYKMZfIfF9Kg,iK+5dg5IFkezOhpPPtu74A,,,Y,0,0,,,2013-11-05 11:09,2013-11-05 11:09,admin,admin,
688,102405,4512,26243,6590,0,N,N,N,CP_Drtn,TT_Task,DT_FixedDUR2,TK_NotStart,JF721.695,Erect & Tack Bottom Plates,6951,0,0,160,0,1320,1320,160,600,0,600,,,,2012-12-03 10:00,2012-12-20 10:00,,2012-12-03 10:00,2012-12-20 10:00,2012-12-03 10:00,2012-12-20 10:00,2012-12-03 10:00,2012-12-20 10:00,2012-12-03 10:00,2012-12-20 10:00,,PT_Normal,,,,,Opr23yq4aUu4W9LJmYsQ+A,MQDw194aYESKum+fkXmNFw,,,Y,0,0,,,2013-11-05 11:09,2013-11-05 11:09,admin,admin,
689,102406,4512,26243,6590,0,N,N,N,CP_Drtn,TT_Task,DT_FixedDUR2,TK_NotStart,JF721.696,Welding of Bottom Plates,6968,0,0,200,0,1540,1540,200,700,0,700,,,,2012-12-20 10:00,2013-01-10 15:00,,2012-12-20 10:00,2013-01-10 15:00,2012-12-20 10:00,2013-01-10 15:00,2012-12-20 10:00,2013-01-10 15:00,2012-12-20 10:00,2013-01-10 15:00,,PT_Normal,,,,,mbyYVjmfwUKye8nsBQllZA,ulLMCHQR/0GnA+7JHiR90A,,,Y,0,0,,,2013-11-05 11:09,2013-11-05 11:09,admin,admin,
690,102407,4512,26243,6590,0,N,N,N,CP_Drtn,TT_Task,DT_FixedDUR2,TK_NotStart,JF721.697,Visual Inspection & Cleaning,6958,0,0,8,0,210,210,8,100,0,100,,,,2013-01-10 15:00,2013-01-12 08:00,,2013-01-10 15:00,2013-01-12 08:00,2013-01-10 15:00,2013-01-12 08:00,2013-01-10 15:00,2013-01-12 08:00,2013-01-10 15:00,2013-01-12 08:00,,PT_Normal,,,,,JXkfEMt+GkysbkeCIgcq0A,LrOG1LWhOEK0Et4ItbMRXw,,,Y,0,0,,,2013-11-05 11:09,2013-11-05 11:09,admin,admin,
691,102408,4512,26243,6590,0,N,N,N,CP_Drtn,TT_Task,DT_FixedDUR2,TK_NotStart,JF721.698,Carry Out NDT & Vaccuum Box Test,6928,0,0,16,0,440,440,16,180,0,180,,,,2013-01-12 08:00,2013-01-13 14:00,,2013-01-12 08:00,2013-01-13 14:00,2013-01-12 08:00,2013-01-13 14:00,2013-01-12 08:00,2013-01-13 14:00,2013-01-12 08:00,2013-01-13 14:00,,PT_Normal,,,,,tzWl4ZIySkuIfM4NpQJvqg,5dhYBaFVVEynToPcLFCXMw,,,Y,0,0,,,2013-11-05 11:09,2013-11-05 11:09,admin,admin,
692,102409,4512,26244,6590,0,N,N,N,CP_Drtn,TT_Task,DT_FixedDUR2,TK_NotStart,JF721.699,Prepare Shell Course # 1 for Erection,6968,0,0,24,0,250,250,24,90,0,90,,,,2013-01-12 16:00,2013-01-15 10:00,,2013-01-12 16:00,2013-01-15 10:00,2013-01-12 16:00,2013-01-15 10:00,2013-01-12 16:00,2013-01-15 10:00,2013-01-12 16:00,2013-01-15 10:00,,PT_Normal,,,,,1ie4qw49R0e4aXIg8NW7iA,d6c4iEtrb0uIHtJeGdpJAg,,,Y,0,0,,,2013-11-05 11:09,2013-11-05 11:09,admin,admin,
693,102410,4512,26244,6590,0,N,N,N,CP_Drtn,TT_Task,DT_FixedDUR2,TK_NotStart,JF721.700,Erect & Tack Shell Course # 1,6968,0,0,32,0,500,500,32,220,0,220,,,,2013-01-15 10:00,2013-01-18 14:30,,2013-01-15 10:00,2013-01-18 14:30,2013-01-15 10:00,2013-01-18 14:30,2013-01-15 10:00,2013-01-18 14:30,2013-01-15 10:00,2013-01-18 14:30,,PT_Normal,,,,,csiZPVBSHkOxDsHIkmLPOA,u8XAl/Bct0CL9S4Fwy2y+g,,,Y,0,0,,,2013-11-05 11:09,2013-11-05 11:09,admin,admin,
694,102411,4512,26244,6590,0,N,N,N,CP_Drtn,TT_Task,DT_FixedDUR2,TK_NotStart,JF721.701,Weld Outer Vertical Seam,6967,0,0,32,0,500,500,32,180,0,180,,,,2013-01-16 08:00,2013-01-19 15:00,,2013-01-16 08:00,2013-01-19 15:00,2013-01-16 08:00,2013-01-19 15:00,2013-01-16 08:00,2013-01-19 15:00,2013-01-16 08:00,2013-01-19 15:00,,PT_Normal,,,,,TBcAsD0KzkyHB7Lhpi6IwQ,Pj7rh0WrJEi066zVy+zJkA,,,Y,0,0,,,2013-11-05 11:09,2013-11-05 11:09,admin,admin,
695,102412,4512,26244,6590,0,N,N,N,CP_Drtn,TT_Task,DT_FixedDUR2,TK_NotStart,JF721.702,Backgouge & NDT Inside Vertical Seam,6951,0,0,32,0,540,540,32,240,0,240,,,,2013-01-16 16:00,2013-01-20 13:00,,2013-01-16 16:00,2013-01-20 13:00,2013-01-16 16:00,2013-01-20 13:00,2013-01-16 16:00,2013-01-20 13:00,2013-01-16 16:00,2013-01-20 13:00,,PT_Normal,,,,,V+inywj+10a230MsaXoLYQ,9SqiV+THWkOMSIPsZHiKPA,,,Y,0,0,,,2013-11-05 11:09,2013-11-05 11:09,admin,admin,
696,102413,4512,26244,6590,0,N,N,N,CP_Drtn,TT_Task,DT_FixedDUR2,TK_NotStart,JF721.703,Weld Inside Vertical Seam,6968,0,0,32,0,540,540,32,240,0,240,,,,2013-01-17 14:00,2013-01-21 11:00,,2013-01-17 14:00,2013-01-21 11:00,2013-01-17 14:00,2013-01-21 11:00,2013-01-17 14:00,2013-01-21 11:00,2013-01-17 14:00,2013-01-21 11:00,,PT_Normal,,,,,MGkMkIn000Ojq39wgd/YYw,AdTl9eI0IUWBqeDO85uDcw,,,Y,0,0,,,2013-11-05 11:09,2013-11-05 11:09,admin,admin,
697,102414,4512,26245,6590,0,N,N,N,CP_Drtn,TT_Task,DT_FixedDUR2,TK_NotStart,JF721.704,Prepare Shell Course # 2 for Erection,6968,0,0,24,0,260,260,24,120,0,120,,,,2013-01-19 15:00,2013-01-22 09:00,,2013-01-19 15:00,2013-01-22 09:00,2013-01-19 15:00,2013-01-22 09:00,2013-01-19 15:00,2013-01-22 09:00,2013-01-19 15:00,2013-01-22 09:00,,PT_Normal,,,,,JP6rNkFkDkmP/09/SSlgIQ,tUBKxP5aRk2fnpam+AvfQg,,,Y,0,0,,,2013-11-05 11:09,2013-11-05 11:09,admin,admin,
698,102415,4512,26245,6590,0,N,N,N,CP_Drtn,TT_Task,DT_FixedDUR2,TK_NotStart,JF721.705,Erect & Tack Shell Course # 2,6968,0,0,32,0,540,540,32,240,0,240,,,,2013-01-22 09:00,2013-01-25 13:30,,2013-01-22 09:00,2013-01-25 13:30,2013-01-22 09:00,2013-01-25 13:30,2013-01-22 09:00,2013-01-25 13:30,2013-01-22 09:00,2013-01-25 13:30,,PT_Normal,,,,,987DRmnNXECOE2/5KtnGsw,t4ZbSXnJU02oEmyLh6ubyw,,,Y,0,0,,,2013-11-05 11:09,2013-11-05 11:09,admin,admin,
699,102416,4512,26245,6590,0,N,N,N,CP_Drtn,TT_Task,DT_FixedDUR2,TK_NotStart,JF721.706,Weld Outer Vertical Seam,6968,0,0,40,0,810,810,40,360,0,360,,,,2013-01-23 07:00,2013-01-27 11:00,,2013-01-23 07:00,2013-01-27 11:00,2013-01-23 07:00,2013-01-27 11:00,2013-01-23 07:00,2013-01-27 11:00,2013-01-23 07:00,2013-01-27 11:00,,PT_Normal,,,,,Rj9y/1l5NEqnSm5OfYSuNA,HYkbKNWITEqZxNX0M8mnCw,,,Y,0,0,,,2013-11-05 11:09,2013-11-05 11:09,admin,admin,
700,102417,4512,26245,6590,0,N,N,N,CP_Drtn,TT_Task,DT_FixedDUR2,TK_NotStart,JF721.707,Backgouge & NDT Inside Vertical Seam,6968,0,0,32,0,500,500,32,240,0,240,,,,2013-01-23 15:00,2013-01-27 11:00,,2013-01-23 15:00,2013-01-27 11:00,2013-01-23 15:00,2013-01-27 11:00,2013-01-23 15:00,2013-01-27 11:00,2013-01-23 15:00,2013-01-27 11:00,,PT_Normal,,,,,DzWzuH6OKUOlfwWar/GE8Q,gNhWts4SvEK3BpGhG9B+zw,,,Y,0,0,,,2013-11-05 11:09,2013-11-05 11:09,admin,admin,
701,102418,4512,26245,6590,0,N,N,N,CP_Drtn,TT_Task,DT_FixedDUR2,TK_NotStart,JF721.708,Weld Inside Vertical Seam,6968,0,0,32,0,500,500,32,240,0,240,,,,2013-01-24 13:00,2013-01-27 19:00,,2013-01-24 13:00,2013-01-27 19:00,2013-01-24 13:00,2013-01-27 19:00,2013-01-24 13:00,2013-01-27 19:00,2013-01-24 13:00,2013-01-27 19:00,,PT_Normal,,,,,nMF7Bo538UWoiwiuEVnIKQ,MvLRK6I6TEmYCaexynKPLQ,,,Y,0,0,,,2013-11-05 11:09,2013-11-05 11:09,admin,admin,
702,102419,4512,26245,6590,0,N,N,N,CP_Drtn,TT_Task,DT_FixedDUR2,TK_NotStart,JF721.709,"""""Fit & Tack Horizontal Seam between Shell Course # 1 & 2""""",6968,0,0,32,0,520,520,32,220,0,220,,,,2013-01-25 13:30,2013-01-28 10:00,,2013-01-25 13:30,2013-01-28 10:00,2013-01-25 13:30,2013-01-28 10:00,2013-01-25 13:30,2013-01-28 10:00,2013-01-25 13:30,2013-01-28 10:00,,PT_Normal,,,,,EI88Wjhn00KZQFc0ZJbZHQ,An8zdtgrsUKiV46KXvF9HQ,,,Y,0,0,,,2013-11-05 11:09,2013-11-05 11:09,admin,admin,
703,102420,4512,26245,6590,0,N,N,N,CP_Drtn,TT_Task,DT_FixedDUR2,TK_NotStart,JF721.710,"""""Weld Outer Horizontal Seam between Shell Course # 1 & 2""""",6968,0,0,48,0,1080,1080,48,440,0,440,,,,2013-01-26 14:00,2013-01-30 14:00,,2013-01-26 14:00,2013-01-30 14:00,2013-01-26 14:00,2013-01-30 14:00,2013-01-26 14:00,2013-01-30 14:00,2013-01-26 14:00,2013-01-30 14:00,,PT_Normal,,,,,+50DY6XV60iMaaRRzG/Wew,QppJYaxV/0mwUOr4zKE89Q,,,Y,0,0,,,2013-11-05 11:09,2013-11-05 11:09,admin,admin,
704,102421,4512,26245,6590,0,N,N,N,CP_Drtn,TT_Task,DT_FixedDUR2,TK_NotStart,JF721.711,"""""Backgouge & NDT Inside Horizontal Seam between Shell Course# 1 & 2""""",6968,0,0,32,0,540,540,32,240,0,240,,,,2013-01-27 11:00,2013-01-29 16:00,,2013-01-27 11:00,2013-01-29 16:00,2013-01-27 11:00,2013-01-29 16:00,2013-01-27 11:00,2013-01-29 16:00,2013-01-27 11:00,2013-01-29 16:00,,PT_Normal,,,,,3qSJs10UwEuvwOPxPQWzTw,fuk5zwl2FUybFPoMM/N9+g,,,Y,0,0,,,2013-11-05 11:09,2013-11-05 11:09,admin,admin,
705,102422,4512,26245,6590,0,N,N,N,CP_Drtn,TT_Task,DT_FixedDUR2,TK_NotStart,JF721.712,"Weld Inner Horizontal Seam between Shell Course # 1 & 2""""",6968,0,0,32,0,540,540,32,240,0,240,,,,2013-01-27 19:00,2013-01-30 14:00,,2013-01-27 19:00,2013-01-30 14:00,2013-01-27 19:00,2013-01-30 14:00,2013-01-27 19:00,2013-01-30 14:00,2013-01-27 19:00,2013-01-30 14:00,,PT_Normal,,,,,4l3PltYgf0iP+XjMnKup5Q,sUyc0ELb1ki4P7ix77b7og,,,Y,0,0,,,2013-11-05 11:09,2013-11-05 11:09,admin,admin,
706,102423,4512,26246,6590,0,N,N,N,CP_Drtn,TT_Task,DT_FixedDUR2,TK_NotStart,JF721.713,Prepare Shell Course # 3 for Erection,6968,0,0,24,0,260,260,24,120,0,120,,,,2013-01-27 19:00,2013-01-29 16:00,,2013-01-27 19:00,2013-01-29 16:00,2013-01-27 19:00,2013-01-29 16:00,2013-01-27 19:00,2013-01-29 16:00,2013-01-27 19:00,2013-01-29 16:00,,PT_Normal,,,,,9/c6mnHxsUGHy9EN7qDEow,8AASL4v1k06BiIB/pADDng,,,Y,0,0,,,2013-11-05 11:09,2013-11-05 11:09,admin,admin,
707,102424,4512,26246,6590,0,N,N,N,CP_Drtn,TT_Task,DT_FixedDUR2,TK_NotStart,JF721.714,Erect & Tack Shell Course # 3,6968,0,0,32,0,520,520,32,240,0,240,,,,2013-01-29 16:00,2013-02-02 13:00,,2013-01-29 16:00,2013-02-02 13:00,2013-01-29 16:00,2013-02-02 13:00,2013-01-29 16:00,2013-02-02 13:00,2013-01-29 16:00,2013-02-02 13:00,,PT_Normal,,,,,jlvJjRxBgUSFhf0PP1Zq0Q,gsNf5zqwsE2gLlU6bfL/Nw,,,Y,0,0,,,2013-11-05 11:09,2013-11-05 11:09,admin,admin,
708,102425,4512,26246,6590,0,N,N,N,CP_Drtn,TT_Task,DT_FixedDUR2,TK_NotStart,JF721.715,Weld Outer Vertical Seam,6968,0,0,40,0,780,780,40,360,0,360,,,,2013-01-30 14:00,2013-02-04 09:00,,2013-01-30 14:00,2013-02-04 09:00,2013-01-30 14:00,2013-02-04 09:00,2013-01-30 14:00,2013-02-04 09:00,2013-01-30 14:00,2013-02-04 09:00,,PT_Normal,,,,,tIxoGrTZUk6SeTFJKOB8GQ,mnDy3cawHUWGQMRViNnHEg,,,Y,0,0,,,2013-11-05 11:09,2013-11-05 11:09,admin,admin,
709,102426,4512,26246,6590,0,N,N,N,CP_Drtn,TT_Task,DT_FixedDUR2,TK_NotStart,JF721.716,Backgouge & NDT Inside Vertical Seam,6968,0,0,32,0,540,540,32,240,0,240,,,,2013-01-31 12:00,2013-02-04 09:00,,2013-01-31 12:00,2013-02-04 09:00,2013-01-31 12:00,2013-02-04 09:00,2013-01-31 12:00,2013-02-04 09:00,2013-01-31 12:00,2013-02-04 09:00,,PT_Normal,,,,,zhonbwfiTECjABqVHWADSA,TJ7Pt0KlqkyDdKuYZApozg,,,Y,0,0,,,2013-11-05 11:09,2013-11-05 11:09,admin,admin,
710,102427,4512,26246,6590,0,N,N,N,CP_Drtn,TT_Task,DT_FixedDUR2,TK_NotStart,JF721.717,Weld Inside Vertical Seam,6968,0,0,32,0,500,500,32,240,0,240,,,,2013-02-01 12:30,2013-02-04 17:00,,2013-02-01 12:30,2013-02-04 17:00,2013-02-01 12:30,2013-02-04 17:00,2013-02-01 12:30,2013-02-04 17:00,2013-02-01 12:30,2013-02-04 17:00,,PT_Normal,,,,,lIPXJ0y0S0uOplzr4sVrWw,uHgTCkGX4EC7mXgU+bVjUw,,,Y,0,0,,,2013-11-05 11:09,2013-11-05 11:09,admin,admin,
711,102428,4512,26246,6590,0,N,N,N,CP_Drtn,TT_Task,DT_FixedDUR2,TK_NotStart,JF721.718,"""""Fit & Tack Horizontal Seam between Shell Course # 2 & 3""""",6968,0,0,32,0,500,500,32,240,0,240,,,,2013-02-02 13:00,2013-02-05 15:00,,2013-02-02 13:00,2013-02-05 15:00,2013-02-02 13:00,2013-02-05 15:00,2013-02-02 13:00,2013-02-05 15:00,2013-02-02 13:00,2013-02-05 15:00,,PT_Normal,,,,,eNIIc4/3IkqQc+cxAdBH/g,0Fpa1bbDfkO1HV8FRhudpw,,,Y,0,0,,,2013-11-05 11:09,2013-11-05 11:09,admin,admin,
712,102429,4512,26246,6590,0,N,N,N,CP_Drtn,TT_Task,DT_FixedDUR2,TK_NotStart,JF721.719,"""""Weld Outer Horizontal Seam between Shell Course # 2 & 3""""",6968,0,0,48,0,1000,1000,48,480,0,480,,,,2013-02-03 11:00,2013-02-08 11:30,,2013-02-03 11:00,2013-02-08 11:30,2013-02-03 11:00,2013-02-08 11:30,2013-02-03 11:00,2013-02-08 11:30,2013-02-03 11:00,2013-02-08 11:30,,PT_Normal,,,,,2poLnGbYK0my2wg+dusAyQ,ahlXcbBNnUOH3Ya+5vuoVQ,,,Y,0,0,,,2013-11-05 11:09,2013-11-05 11:09,admin,admin,
713,102430,4512,26246,6590,0,N,N,N,CP_Drtn,TT_Task,DT_FixedDUR2,TK_NotStart,JF721.720,"""""Backgouge & NDT Inside Horizontal Seam between Shell Course# 2 & 3""""",6968,0,0,32,0,540,540,32,240,0,240,,,,2013-02-04 09:00,2013-02-07 11:00,,2013-02-04 09:00,2013-02-07 11:00,2013-02-04 09:00,2013-02-07 11:00,2013-02-04 09:00,2013-02-07 11:00,2013-02-04 09:00,2013-02-07 11:00,,PT_Normal,,,,,MGxybQ1YEUCm8D850GgUIg,HhrHa5cwWUKxkpOy1B8c5g,,,Y,0,0,,,2013-11-05 11:09,2013-11-05 11:09,admin,admin,
714,102431,4512,26246,6590,0,N,N,N,CP_Drtn,TT_Task,DT_FixedDUR2,TK_NotStart,JF721.721,"Weld Inner Horizontal Seam between Shell Course # 2 & 3""""",6968,0,0,32,0,520,520,32,240,0,240,,,,2013-02-05 07:00,2013-02-08 11:30,,2013-02-05 07:00,2013-02-08 11:30,2013-02-05 07:00,2013-02-08 11:30,2013-02-05 07:00,2013-02-08 11:30,2013-02-05 07:00,2013-02-08 11:30,,PT_Normal,,,,,ffQ9swff9ECyynpnB4hNSw,h5xQ4m8eeEGNuQzzGrRSxA,,,Y,0,0,,,2013-11-05 11:09,2013-11-05 11:09,admin,admin,
715,102432,4512,26247,6590,0,N,N,N,CP_Drtn,TT_Task,DT_FixedDUR2,TK_NotStart,JF721.722,Prepare Shell Course # 4 for Erection,6968,0,0,24,0,260,260,24,120,0,120,,,,2013-02-08 11:30,2013-02-11 08:00,,2013-02-08 11:30,2013-02-11 08:00,2013-02-08 11:30,2013-02-11 08:00,2013-02-08 11:30,2013-02-11 08:00,2013-02-08 11:30,2013-02-11 08:00,,PT_Normal,,,,,YcE9nRFcdkiVJ5N3fm9hkA,pEhbXoqp+UK/8GB3N6qnKg,,,Y,0,0,,,2013-11-05 11:09,2013-11-05 11:09,admin,admin,
716,102433,4512,26247,6590,0,N,N,N,CP_Drtn,TT_Task,DT_FixedDUR2,TK_NotStart,JF721.723,Erect & Tack Shell Course # 4,6968,0,0,32,0,540,540,32,240,0,240,,,,2013-02-11 08:00,2013-02-14 10:00,,2013-02-11 08:00,2013-02-14 10:00,2013-02-11 08:00,2013-02-14 10:00,2013-02-11 08:00,2013-02-14 10:00,2013-02-11 08:00,2013-02-14 10:00,,PT_Normal,,,,,pZGuF3HvykCA0MK00ophHg,zqEFTtIB/Uij1YTqJIT/fA,,,Y,0,0,,,2013-11-05 11:09,2013-11-05 11:09,admin,admin,
717,102434,4512,26247,6590,0,N,N,N,CP_Drtn,TT_Task,DT_FixedDUR2,TK_NotStart,JF721.724,Weld Outer Vertical Seam,6968,0,0,40,0,780,780,40,360,0,360,,,,2013-02-11 16:00,2013-02-16 11:00,,2013-02-11 16:00,2013-02-16 11:00,2013-02-11 16:00,2013-02-16 11:00,2013-02-11 16:00,2013-02-16 11:00,2013-02-11 16:00,2013-02-16 11:00,,PT_Normal,,,,,wgbEAiaq10Oi9h8OQ92zGw,vnvGHSVRGUCm/HDpVARBMA,,,Y,0,0,,,2013-11-05 11:09,2013-11-05 11:09,admin,admin,
718,102435,4512,26247,6590,0,N,N,N,CP_Drtn,TT_Task,DT_FixedDUR2,TK_NotStart,JF721.725,Backgouge & NDT Inside Vertical Seam,6968,0,0,32,0,500,500,32,220,0,220,,,,2013-02-12 14:00,2013-02-16 11:00,,2013-02-12 14:00,2013-02-16 11:00,2013-02-12 14:00,2013-02-16 11:00,2013-02-12 14:00,2013-02-16 11:00,2013-02-12 14:00,2013-02-16 11:00,,PT_Normal,,,,,JuYFwbilW0eEcM9vFl8dkg,wq6YEPS+n0SbEnGllNpX1Q,,,Y,0,0,,,2013-11-05 11:09,2013-11-05 11:09,admin,admin,
719,102436,4512,26247,6590,0,N,N,N,CP_Drtn,TT_Task,DT_FixedDUR2,TK_NotStart,JF721.726,Weld Inside Vertical Seam,6968,0,0,32,0,520,520,32,220,0,220,,,,2013-02-13 12:00,2013-02-17 09:00,,2013-02-13 12:00,2013-02-17 09:00,2013-02-13 12:00,2013-02-17 09:00,2013-02-13 12:00,2013-02-17 09:00,2013-02-13 12:00,2013-02-17 09:00,,PT_Normal,,,,,enm7c+hHVkKX5LEV+np+qg,xNppXQnSaE6h4JzTvCsoQg,,,Y,0,0,,,2013-11-05 11:09,2013-11-05 11:09,admin,admin,
720,102437,4512,26247,6590,0,N,N,N,CP_Drtn,TT_Task,DT_FixedDUR2,TK_NotStart,JF721.727,"""""Fit & Tack Horizontal Seam between Shell Course # 3 & 4""""",6968,0,0,32,0,540,540,32,220,0,220,,,,2013-02-14 10:00,2013-02-17 17:00,,2013-02-14 10:00,2013-02-17 17:00,2013-02-14 10:00,2013-02-17 17:00,2013-02-14 10:00,2013-02-17 17:00,2013-02-14 10:00,2013-02-17 17:00,,PT_Normal,,,,,TeiU0EhSmECcpQVg5G3rEg,0FPcbobKEk2gDGHKJGGW6g,,,Y,0,0,,,2013-11-05 11:09,2013-11-05 11:09,admin,admin,
721,102438,4512,26247,6590,0,N,N,N,CP_Drtn,TT_Task,DT_FixedDUR2,TK_NotStart,JF721.728,Weld Outer Horizontal Seam between Shell Course # 3 & 4,6915,0,0,48,0,1040,1040,48,480,0,480,,,,2013-02-15 10:30,2013-02-20 11:00,,2013-02-15 10:30,2013-02-20 11:00,2013-02-15 10:30,2013-02-20 11:00,2013-02-15 10:30,2013-02-20 11:00,2013-02-15 10:30,2013-02-20 11:00,,PT_Normal,,,,,cJe3LACpKkSHe47eLjcX5w,8kB5x2PPMUa0WYhL5QQKfQ,,,Y,0,0,,,2013-11-05 11:09,2013-11-05 11:09,admin,admin,
722,102439,4512,26247,6590,0,N,N,N,CP_Drtn,TT_Task,DT_FixedDUR2,TK_NotStart,JF721.729,"""""Backgouge & NDT Inside Horizontal Seam between Shell Course# 3 & 4""""",6968,0,0,32,0,520,520,32,240,0,240,,,,2013-02-16 11:00,2013-02-19 13:00,,2013-02-16 11:00,2013-02-19 13:00,2013-02-16 11:00,2013-02-19 13:00,2013-02-16 11:00,2013-02-19 13:00,2013-02-16 11:00,2013-02-19 13:00,,PT_Normal,,,,,JYbBtFfq4ES7bG5Vx8rnww,fkTSL5wJr0e3OpWOpI6P+Q,,,Y,0,0,,,2013-11-05 11:09,2013-11-05 11:09,admin,admin,
723,102440,4512,26247,6590,0,N,N,N,CP_Drtn,TT_Task,DT_FixedDUR2,TK_NotStart,JF721.730,"Weld Inner Horizontal Seam between Shell Course # 3 & 4""""",6968,0,0,32,0,520,520,32,240,0,240,,,,2013-02-17 09:00,2013-02-20 11:00,,2013-02-17 09:00,2013-02-20 11:00,2013-02-17 09:00,2013-02-20 11:00,2013-02-17 09:00,2013-02-20 11:00,2013-02-17 09:00,2013-02-20 11:00,,PT_Normal,,,,,1CWXhzkPTU+3Zyu+YjEvjg,E04mfgs/IkmGoXk3d4cllA,,,Y,0,0,,,2013-11-05 11:09,2013-11-05 11:09,admin,admin,
724,102441,4512,26247,6590,0,N,N,N,CP_Drtn,TT_Task,DT_FixedDUR2,TK_NotStart,JF721.731,"Fit, Weld Shell Course # 1 Annular Plate & Oil Test",6968,176,176,64,0,1620,1620,64,780,0,780,,,,2013-02-08 11:30,2013-02-15 10:30,,2013-01-21 11:00,2013-01-27 19:00,2013-01-21 11:00,2013-01-27 19:00,2013-01-21 11:00,2013-01-27 19:00,2013-02-08 11:30,2013-02-15 10:30,,PT_Normal,,,,,/JvUyWEBZ0Gbr+zbX3Iyag,hvPYL3f0Bkq0qzB6OfkOgA,,,N,0,0,,,2013-11-05 11:09,2013-11-05 11:09,admin,admin,
725,102442,4512,26248,6590,0,N,N,N,CP_Drtn,TT_Task,DT_FixedDUR2,TK_NotStart,JF721.732,Erect & Tack Curve Angle,6942,0,0,32,0,560,560,32,220,0,220,,,,2013-02-13 12:00,2013-02-17 09:00,,2013-02-13 12:00,2013-02-17 09:00,2013-02-13 12:00,2013-02-17 09:00,2013-02-13 12:00,2013-02-17 09:00,2013-02-13 12:00,2013-02-17 09:00,,PT_Normal,,,,,MfwQNbXmME6Ty6nFiZzHPg,264/9RFIFU2QE4QIYg3NZQ,,,Y,0,0,,,2013-11-05 11:09,2013-11-05 11:09,admin,admin,
726,102443,4512,26248,6590,0,N,N,N,CP_Drtn,TT_Task,DT_FixedDUR2,TK_NotStart,JF721.733,Weld Curve Angle,6968,0,0,64,0,920,920,64,360,0,360,,,,2013-02-17 09:00,2013-02-24 08:00,,2013-02-17 09:00,2013-02-24 08:00,2013-02-17 09:00,2013-02-24 08:00,2013-02-17 09:00,2013-02-24 08:00,2013-02-17 09:00,2013-02-24 08:00,,PT_Normal,,,,,WgQ1AJ86/U2MN4e419xlLQ,tDxpS/6k5EqlBlh1RVcTpQ,,,Y,0,0,,,2013-11-05 11:09,2013-11-05 11:09,admin,admin,
727,102444,4512,26249,6590,0,N,N,N,CP_Drtn,TT_Task,DT_FixedDUR2,TK_NotStart,JF721.734,MArk & Cut Holes,6968,0,0,40,0,660,660,40,270,0,270,,,,2013-02-17 09:00,2013-02-21 09:00,,2013-02-17 09:00,2013-02-21 09:00,2013-02-17 09:00,2013-02-21 09:00,2013-02-17 09:00,2013-02-21 09:00,2013-02-17 09:00,2013-02-21 09:00,,PT_Normal,,,,,EcqpMC2ftUiPMbMbkv8XgA,6VvP1/Eetk+woPcIHEWyug,,,Y,0,0,,,2013-11-05 11:09,2013-11-05 11:09,admin,admin,
728,102445,4512,26249,6590,0,N,N,N,CP_Drtn,TT_Task,DT_FixedDUR2,TK_NotStart,JF721.735,"Fit & Tack Manholes ,Nozzles on Shell",6968,0,0,32,0,440,440,32,160,0,160,,,,2013-02-18 07:00,2013-02-21 09:00,,2013-02-18 07:00,2013-02-21 09:00,2013-02-18 07:00,2013-02-21 09:00,2013-02-18 07:00,2013-02-21 09:00,2013-02-18 07:00,2013-02-21 09:00,,PT_Normal,,,,,rQADrvWVUE+bSvt2fRRmzg,qCEIwoHwLUC3nsLXctHAiw,,,Y,0,0,,,2013-11-05 11:09,2013-11-05 11:09,admin,admin,
729,102446,4512,26249,6590,0,N,N,N,CP_Drtn,TT_Task,DT_FixedDUR2,TK_NotStart,JF721.736,Weld MAnholes & Nozzles on shell,6968,0,0,56,0,950,950,56,300,0,300,,,,2013-02-18 15:00,2013-02-24 16:00,,2013-02-18 15:00,2013-02-24 16:00,2013-02-18 15:00,2013-02-24 16:00,2013-02-18 15:00,2013-02-24 16:00,2013-02-18 15:00,2013-02-24 16:00,,PT_Normal,,,,,jxinNnSBHUOfPQfhmQ4MZg,cSsrqJmAIEWOyweknl0kig,,,Y,0,0,,,2013-11-05 11:09,2013-11-05 11:09,admin,admin,
730,102447,4512,26249,6590,0,N,N,N,CP_Drtn,TT_Task,DT_FixedDUR2,TK_NotStart,JF721.737,NDT on Manholes & Nozzles on shell,6968,0,0,24,0,190,190,24,60,0,60,,,,2013-02-24 16:00,2013-02-27 10:00,,2013-02-24 16:00,2013-02-27 10:00,2013-02-24 16:00,2013-02-27 10:00,2013-02-24 16:00,2013-02-27 10:00,2013-02-24 16:00,2013-02-27 10:00,,PT_Normal,,,,,Am0+O0D7jEm+iJlJOB7kjA,4n51B10SOkuPho+tEFqXAw,,,Y,0,0,,,2013-11-05 11:09,2013-11-05 11:09,admin,admin,
731,102448,4512,26250,6590,0,N,N,N,CP_Drtn,TT_Task,DT_FixedDUR2,TK_NotStart,JF721.738,Prepare Tank for Roof Contruction,6968,0,0,32,0,400,400,32,120,0,120,,,,2013-02-24 16:00,2013-02-28 08:00,,2013-02-24 16:00,2013-02-28 08:00,2013-02-24 16:00,2013-02-28 08:00,2013-02-24 16:00,2013-02-28 08:00,2013-02-24 16:00,2013-02-28 08:00,,PT_Normal,,,,,mhHkSp1nRE2H2huVHIKzRg,JuUI7e/+Eky2SSzpB+73Rg,,,Y,0,0,,,2013-11-05 11:09,2013-11-05 11:09,admin,admin,
732,102449,4512,26250,6590,0,N,N,N,CP_Drtn,TT_Task,DT_FixedDUR2,TK_NotStart,JF721.739,Install Shoe Support Structure on Shell,6968,0,0,64,0,1200,1200,64,360,0,360,,,,2013-02-28 08:00,2013-03-06 17:00,,2013-02-28 08:00,2013-03-06 17:00,2013-02-28 08:00,2013-03-06 17:00,2013-02-28 08:00,2013-03-06 17:00,2013-02-28 08:00,2013-03-06 17:00,,PT_Normal,,,,,1gTnn60xqkSSBx2ppCODnA,AjFchk4KOUOduILNuX9m8w,,,Y,0,0,,,2013-11-05 11:09,2013-11-05 11:09,admin,admin,
733,102450,4512,26250,6590,0,N,N,N,CP_Drtn,TT_Task,DT_FixedDUR2,TK_NotStart,JF721.740,Install / Assemble Roof Rafters,6968,0,0,160,0,4000,4000,160,1200,0,1200,,,,2013-03-07 07:00,2013-03-24 12:00,,2013-03-07 07:00,2013-03-24 12:00,2013-03-07 07:00,2013-03-24 12:00,2013-03-07 07:00,2013-03-24 12:00,2013-03-07 07:00,2013-03-24 12:00,,PT_Normal,,,,,VBGlZOwGRUyb1c8OLQpbjA,UW8rCbwa4EW7OWp1pJCa7Q,,,Y,0,0,,,2013-11-05 11:09,2013-11-05 11:09,admin,admin,
734,102451,4512,26250,6590,0,N,N,N,CP_Drtn,TT_Task,DT_FixedDUR2,TK_NotStart,JF721.741,Installation of Roof Plates,6968,0,0,120,0,2850,2850,120,900,0,900,,,,2013-03-24 12:00,2013-04-06 12:00,,2013-03-24 12:00,2013-04-06 12:00,2013-03-24 12:00,2013-04-06 12:00,2013-03-24 12:00,2013-04-06 12:00,2013-03-24 12:00,2013-04-06 12:00,,PT_Normal,,,,,ooVWdamKVkqyQAghSPHFGg,K+MXqaqAaEWcKhGbBseJOQ,,,Y,0,0,,,2013-11-05 11:09,2013-11-05 11:09,admin,admin,
735,102452,4512,26250,6590,0,N,N,N,CP_Drtn,TT_Task,DT_FixedDUR2,TK_NotStart,JF721.742,Install Roof Manholes & Nozzles,6968,0,0,56,0,590,590,56,200,0,200,,,,2013-04-06 12:00,2013-04-12 10:30,,2013-04-06 12:00,2013-04-12 10:30,2013-04-06 12:00,2013-04-12 10:30,2013-04-06 12:00,2013-04-12 10:30,2013-04-06 12:00,2013-04-12 10:30,,PT_Normal,,,,,ruPy35B3vUmrAOljNJhaNQ,LRSeid90Ikus+lDgvPcPaw,,,Y,0,0,,,2013-11-05 11:09,2013-11-05 11:09,admin,admin,
736,102453,4512,26251,6590,0,N,N,N,CP_Drtn,TT_Task,DT_FixedDUR2,TK_NotStart,JF721.743,"Erect & Fix Stairs, Handrails & Platforms on Shell",6968,0,0,32,0,680,680,32,200,0,200,,,,2013-04-12 10:30,2013-04-15 15:00,,2013-04-12 10:30,2013-04-15 15:00,2013-04-12 10:30,2013-04-15 15:00,2013-04-12 10:30,2013-04-15 15:00,2013-04-12 10:30,2013-04-15 15:00,,PT_Normal,,,,,hBeibm1R4USdYy06fWYQWA,ifBqZQcGI0uMIB0OwYDi0g,,,Y,0,0,,,2013-11-05 11:09,2013-11-05 11:09,admin,admin,
737,102454,4512,26251,6590,0,N,N,N,CP_Drtn,TT_Task,DT_FixedDUR2,TK_NotStart,JF721.744,Erect & Fix Roof Platforms & Handrails,6968,0,0,40,0,850,850,40,250,0,250,,,,2013-04-15 15:00,2013-04-20 10:00,,2013-04-15 15:00,2013-04-20 10:00,2013-04-15 15:00,2013-04-20 10:00,2013-04-15 15:00,2013-04-20 10:00,2013-04-15 15:00,2013-04-20 10:00,,PT_Normal,,,,,vUj6m6H8XUaZ6EXTLwrzRQ,ZjjMFrhklEeFjF36ulwagw,,,Y,0,0,,,2013-11-05 11:09,2013-11-05 11:09,admin,admin,
738,102455,4512,26252,6590,0,N,N,N,CP_Drtn,TT_Task,DT_FixedDUR2,TK_NotStart,JF721.745,Install Blind Flanges,6968,0,0,24,0,180,180,24,50,0,50,,,,2013-04-20 10:00,2013-04-22 14:00,,2013-04-20 10:00,2013-04-22 14:00,2013-04-20 10:00,2013-04-22 14:00,2013-04-20 10:00,2013-04-22 14:00,2013-04-20 10:00,2013-04-22 14:00,,PT_Normal,,,,,8ozOY53Sl0+qFmurATYv7Q,wIYsIVQTo06MHvOnMAaKVw,,,Y,0,0,,,2013-11-05 11:09,2013-11-05 11:09,admin,admin,
739,102456,4512,26252,6590,0,N,N,N,CP_Drtn,TT_Task,DT_FixedDUR2,TK_NotStart,JF721.746,Tank Water Filling,6966,0,0,200,0,2300,2300,200,1150,0,1150,,,,2013-04-22 14:00,2013-05-14 09:00,,2013-04-22 14:00,2013-05-14 09:00,2013-04-22 14:00,2013-05-14 09:00,2013-04-22 14:00,2013-05-14 09:00,2013-04-22 14:00,2013-05-14 09:00,,PT_Normal,,,,,ztyHkJwSG0S+dqMUH45dIA,72NAN0UMPki1ck/LrKCVRw,,,Y,0,0,,,2013-11-05 11:09,2013-11-05 11:09,admin,admin,
740,102457,4512,26252,6590,0,N,N,N,CP_Drtn,TT_Task,DT_FixedDUR2,TK_NotStart,JF721.747,Hold Water for 48 Hours,6928,0,0,32,0,180,180,32,80,0,80,,,,2013-05-14 09:00,2013-05-17 13:30,,2013-05-14 09:00,2013-05-17 13:30,2013-05-14 09:00,2013-05-17 13:30,2013-05-14 09:00,2013-05-17 13:30,2013-05-14 09:00,2013-05-17 13:30,,PT_Normal,,,,,PxUlpqwfPEiaQt/LvEwb7w,jg2o1E3Vi0qAf0ymsCl4iw,,,Y,0,0,,,2013-11-05 11:09,2013-11-05 11:09,admin,admin,
741,102458,4512,26252,6590,0,N,N,N,CP_Drtn,TT_Task,DT_FixedDUR2,TK_NotStart,JF721.748,Drain Water from Tank,6951,0,0,112,0,1560,1560,112,480,0,480,,,,2013-05-17 13:30,2013-05-29 13:00,,2013-05-17 13:30,2013-05-29 13:00,2013-05-17 13:30,2013-05-29 13:00,2013-05-17 13:30,2013-05-29 13:00,2013-05-17 13:30,2013-05-29 13:00,,PT_Normal,,,,,Ul+EH6hzoky+PLKqpxtPjw,qldEUK5Jp0Sp3gp41wgJgg,,,Y,0,0,,,2013-11-05 11:09,2013-11-05 11:09,admin,admin,
742,102459,4512,26252,6590,0,N,N,N,CP_Drtn,TT_Task,DT_FixedDUR2,TK_NotStart,JF721.749,Clean & Dry Out Tank,6928,0,0,32,0,260,260,32,60,0,60,,,,2013-05-29 13:00,2013-06-02 10:00,,2013-05-29 13:00,2013-06-02 10:00,2013-05-29 13:00,2013-06-02 10:00,2013-05-29 13:00,2013-06-02 10:00,2013-05-29 13:00,2013-06-02 10:00,,PT_Normal,,,,,mLUMkOWBHEy0Ml0OWLYt5g,aHD29ifABEapv3640O8Gew,,,Y,0,0,,,2013-11-05 11:09,2013-11-05 11:09,admin,admin,
743,102460,4512,26253,6590,0,N,N,N,CP_Drtn,TT_Task,DT_FixedDUR2,TK_NotStart,JF721.750,Erect  Scafolding Outside Tank,6966,40,0,64,0,1040,1040,64,320,0,320,,,,2013-05-21 16:00,2013-05-28 15:00,,2013-05-17 13:30,2013-05-24 12:30,2013-05-17 13:30,2013-05-24 12:30,2013-05-17 13:30,2013-05-24 12:30,2013-05-21 16:00,2013-05-28 15:00,,PT_Normal,,,,,vCAeln+A2kiLOPhlrkidiQ,ZJoLidF+IU6woxt2rwnscA,,,N,0,0,,,2013-11-05 11:09,2013-11-05 11:09,admin,admin,
744,102461,4512,26253,6590,0,N,N,N,CP_Drtn,TT_Task,DT_FixedDUR2,TK_NotStart,JF721.751,External Shell Blast & Prime,6950,40,0,32,0,720,720,32,120,0,120,,,,2013-05-28 15:00,2013-06-01 12:00,,2013-05-24 12:30,2013-05-27 17:00,2013-05-24 12:30,2013-05-27 17:00,2013-05-24 12:30,2013-05-27 17:00,2013-05-28 15:00,2013-06-01 12:00,,PT_Normal,,,,,qfFSJnnlLE2ryiXkVKwyFw,8XQ+e2zkzUi+PwxVOfet3Q,,,N,0,0,,,2013-11-05 11:09,2013-11-05 11:09,admin,admin,
745,102462,4512,26253,6590,0,N,N,N,CP_Drtn,TT_Task,DT_FixedDUR2,TK_NotStart,JF721.752,External Shell Secondary & Final Coat,6965,40,0,32,0,640,640,32,160,0,160,,,,2013-05-29 13:00,2013-06-02 10:00,,2013-05-25 13:00,2013-05-28 15:00,2013-05-25 13:00,2013-05-28 15:00,2013-05-25 13:00,2013-05-28 15:00,2013-05-29 13:00,2013-06-02 10:00,,PT_Normal,,,,,kiixaWAzX0iraqu74oaoKw,Tij5AVVH0EOYCNnyGxg08w,,,N,0,0,,,2013-11-05 11:09,2013-11-05 11:09,admin,admin,
746,102463,4512,26253,6590,0,N,N,N,CP_Drtn,TT_Task,DT_FixedDUR2,TK_NotStart,JF721.753,External Shell Paint Inspection,6935,40,0,8,0,160,160,8,40,0,40,,,,2013-06-02 10:00,2013-06-03 08:00,,2013-05-28 15:00,2013-05-29 13:00,2013-05-28 15:00,2013-05-29 13:00,2013-05-28 15:00,2013-05-29 13:00,2013-06-02 10:00,2013-06-03 08:00,,PT_Normal,,,,,LASSucyk/kiuZUo/uMvC5w,lkbhoStF50WVAl4gbubVLw,,,N,0,0,,,2013-11-05 11:09,2013-11-05 11:09,admin,admin,
747,102464,4512,26253,6590,0,N,N,N,CP_Drtn,TT_Task,DT_FixedDUR2,TK_NotStart,JF721.754,Dismantle External Scaffolding,6957,40,40,16,0,400,400,16,40,0,40,,,,2013-06-03 08:00,2013-06-04 14:00,,2013-05-29 13:00,2013-05-31 11:30,2013-05-29 13:00,2013-05-31 11:30,2013-05-29 13:00,2013-05-31 11:30,2013-06-03 08:00,2013-06-04 14:00,,PT_Normal,,,,,Gal8SnSXok2DRY16OCVrjQ,odHNHxeyjUCrDcZAWZfJyw,,,N,0,0,,,2013-11-05 11:09,2013-11-05 11:09,admin,admin,
748,102465,4512,26254,6590,0,N,N,N,CP_Drtn,TT_Task,DT_FixedDUR2,TK_NotStart,JF721.755,Erect Scafolding Inside Tank,6942,0,0,64,0,980,980,64,180,0,180,,,,2013-06-02 10:00,2013-06-09 09:00,,2013-06-02 10:00,2013-06-09 09:00,2013-06-02 10:00,2013-06-09 09:00,2013-06-02 10:00,2013-06-09 09:00,2013-06-02 10:00,2013-06-09 09:00,,PT_Normal,,,,,PUmKgvJ6bkWlGS9LxmynDQ,ycAVDiwKQUmWV6v1KIt/Ww,,,Y,0,0,,,2013-11-05 11:09,2013-11-05 11:09,admin,admin,
749,102466,4512,26254,6590,0,N,N,N,CP_Drtn,TT_Task,DT_FixedDUR2,TK_NotStart,JF721.756,Internal Shell Blast & Prime,6949,0,0,40,0,510,510,40,90,0,90,,,,2013-06-04 14:00,2013-06-09 09:00,,2013-06-04 14:00,2013-06-09 09:00,2013-06-04 14:00,2013-06-09 09:00,2013-06-04 14:00,2013-06-09 09:00,2013-06-04 14:00,2013-06-09 09:00,,PT_Normal,,,,,p2czh0y3xEqqlOj/YRBbZg,cmdCQPpNqUS/HM1fkBQYkA,,,Y,0,0,,,2013-11-05 11:09,2013-11-05 11:09,admin,admin,
750,102467,4512,26254,6590,0,N,N,N,CP_Drtn,TT_Task,DT_FixedDUR2,TK_NotStart,JF721.757,Internal Shell Secondary & Final Coat,6950,0,0,40,0,480,480,40,120,0,120,,,,2013-06-09 09:00,2013-06-13 09:00,,2013-06-09 09:00,2013-06-13 09:00,2013-06-09 09:00,2013-06-13 09:00,2013-06-09 09:00,2013-06-13 09:00,2013-06-09 09:00,2013-06-13 09:00,,PT_Normal,,,,,PGy9SbjR0kGPh/TFh1BSsQ,pCMVoiusc0Ko5ykyJcrV8Q,,,Y,0,0,,,2013-11-05 11:09,2013-11-05 11:09,admin,admin,
751,102468,4512,26254,6590,0,N,N,N,CP_Drtn,TT_Task,DT_FixedDUR2,TK_NotStart,JF721.758,Internal Shell Paint Inspection,6958,0,0,24,0,150,150,24,40,0,40,,,,2013-06-09 09:00,2013-06-11 13:00,,2013-06-09 09:00,2013-06-11 13:00,2013-06-09 09:00,2013-06-11 13:00,2013-06-09 09:00,2013-06-11 13:00,2013-06-09 09:00,2013-06-11 13:00,,PT_Normal,,,,,munlVuowBkmZWRCMOHDv8Q,o/1SMCAT4k2JkwSD1Q8vbQ,,,Y,0,0,,,2013-11-05 11:09,2013-11-05 11:09,admin,admin,
752,102469,4512,26254,6590,0,N,N,N,CP_Drtn,TT_Task,DT_FixedDUR2,TK_NotStart,JF721.759,Dismantle Internal Scaffolding,6942,0,0,48,0,920,920,48,160,0,160,,,,2013-06-11 13:00,2013-06-16 16:00,,2013-06-11 13:00,2013-06-16 16:00,2013-06-11 13:00,2013-06-16 16:00,2013-06-11 13:00,2013-06-16 16:00,2013-06-11 13:00,2013-06-16 16:00,,PT_Normal,,,,,xmA/IBSWXky2CQzM+t/Fnw,tJFq905MjUSg9ePp2mgiBA,,,Y,0,0,,,2013-11-05 11:09,2013-11-05 11:09,admin,admin,
753,102470,4512,26254,6590,0,N,N,N,CP_Drtn,TT_Task,DT_FixedDUR2,TK_NotStart,JF721.760,Bottom/Annular Plate Blast & Prime,6949,0,0,32,0,320,320,32,80,0,80,,,,2013-06-16 16:00,2013-06-20 08:00,,2013-06-16 16:00,2013-06-20 08:00,2013-06-16 16:00,2013-06-20 08:00,2013-06-16 16:00,2013-06-20 08:00,2013-06-16 16:00,2013-06-20 08:00,,PT_Normal,,,,,WKAmtrgiokS54SoFDpjGiA,URHVzVDL8EejvFLuQCveDA,,,Y,0,0,,,2013-11-05 11:09,2013-11-05 11:09,admin,admin,
754,102471,4512,26254,6590,0,N,N,N,CP_Drtn,TT_Task,DT_FixedDUR2,TK_NotStart,JF721.761,Bottom/Annular Plate Secondary & Final Coat,6950,0,0,32,0,320,320,32,80,0,80,,,,2013-06-20 08:00,2013-06-23 15:00,,2013-06-20 08:00,2013-06-23 15:00,2013-06-20 08:00,2013-06-23 15:00,2013-06-20 08:00,2013-06-23 15:00,2013-06-20 08:00,2013-06-23 15:00,,PT_Normal,,,,,P3yWVxV9LkiUKreaVcFqpg,m5ltdMj360SumiF0UTwZ0g,,,Y,0,0,,,2013-11-05 11:09,2013-11-05 11:09,admin,admin,
755,102472,4512,26254,6590,0,N,N,N,CP_Drtn,TT_Task,DT_FixedDUR2,TK_NotStart,JF721.762,Bottom/Annular Plate Paint Inspection,6942,0,0,24,0,160,160,24,40,0,40,,,,2013-06-23 15:00,2013-06-26 09:00,,2013-06-23 15:00,2013-06-26 09:00,2013-06-23 15:00,2013-06-26 09:00,2013-06-23 15:00,2013-06-26 09:00,2013-06-23 15:00,2013-06-26 09:00,,PT_Normal,,,,,wNPrI8IkJ02/HsYXap0iKw,XJRtEPLhfUOigEAcsjOXrw,,,Y,0,0,,,2013-11-05 11:09,2013-11-05 11:09,admin,admin,
756,102473,4512,26255,6590,0,N,N,N,CP_Drtn,TT_Task,DT_FixedDUR2,TK_NotStart,JF721.763,Tanks lighting,6942,0,0,16,0,180,180,16,60,0,60,,,,2013-08-05 07:00,2013-08-06 13:00,,2013-08-05 07:00,2013-08-06 13:00,2013-08-05 07:00,2013-08-06 13:00,2013-08-05 07:00,2013-08-06 13:00,2013-08-05 07:00,2013-08-06 13:00,,PT_Normal,,,,,ca/mkQsycEK9yo2dEohOXg,h9t22LMDDUyWlfSmoCeGfw,,,Y,0,0,,,2013-11-05 11:09,2013-11-05 11:09,admin,admin,
757,102474,4512,26255,6590,0,N,N,N,CP_Drtn,TT_Task,DT_FixedDUR2,TK_NotStart,JF721.764,Tanks lighting  protection,6942,0,0,24,0,330,330,24,120,0,120,,,,2013-08-06 13:00,2013-08-08 17:00,,2013-08-06 13:00,2013-08-08 17:00,2013-08-06 13:00,2013-08-08 17:00,2013-08-06 13:00,2013-08-08 17:00,2013-08-06 13:00,2013-08-08 17:00,,PT_Normal,,,,,X7yVRU3Zb066Frl5PUfCgA,ncsuAuLOhUGLOjw/8tHHhw,,,Y,0,0,,,2013-11-05 11:09,2013-11-05 11:09,admin,admin,
758,102475,4512,26255,6590,0,N,N,N,CP_Drtn,TT_Task,DT_FixedDUR2,TK_NotStart,JF721.765,Grounding system,6942,0,0,16,0,300,300,16,120,0,120,,,,2013-08-09 09:30,2013-08-11 08:00,,2013-08-09 09:30,2013-08-11 08:00,2013-08-09 09:30,2013-08-11 08:00,2013-08-09 09:30,2013-08-11 08:00,2013-08-09 09:30,2013-08-11 08:00,,PT_Normal,,,,,/k7BGAd110+QwZhjVAPh+w,N32ujtYEVU+bNCKyx8+ZUw,,,Y,0,0,,,2013-11-05 11:09,2013-11-05 11:09,admin,admin,
759,102476,4512,26256,6590,0,N,N,N,CP_Drtn,TT_Task,DT_FixedDUR2,TK_NotStart,JF721.766,Concrete testing,6916,0,0,8,0,220,220,8,80,0,80,,,,2013-08-11 08:00,2013-08-11 16:00,,2013-08-11 08:00,2013-08-11 16:00,2013-08-11 08:00,2013-08-11 16:00,2013-08-11 08:00,2013-08-11 16:00,2013-08-11 08:00,2013-08-11 16:00,,PT_Normal,,,,,7r7cncGvzUeGAHQimQWh1w,8KWZlQ2nDUq+fDRxXlZ4Rg,,,Y,0,0,,,2013-11-05 11:09,2013-11-05 11:09,admin,admin,
760,102477,4512,26256,6590,0,N,N,N,CP_Drtn,TT_Task,DT_FixedDUR2,TK_NotStart,JF721.767,RT testing for the welding,6942,0,0,8,0,220,220,8,80,0,80,,,,2013-08-11 16:00,2013-08-12 14:00,,2013-08-11 16:00,2013-08-12 14:00,2013-08-11 16:00,2013-08-12 14:00,2013-08-11 16:00,2013-08-12 14:00,2013-08-11 16:00,2013-08-12 14:00,,PT_Normal,,,,,Ond/6WhYc0KdoN3s3WttYw,VPXRHMD7NEaYe4XZa7Q0Jw,,,Y,0,0,,,2013-11-05 11:09,2013-11-05 11:09,admin,admin,
761,102478,4512,26256,6590,0,N,N,N,CP_Drtn,TT_Task,DT_FixedDUR2,TK_NotStart,JF721.768,Sand testing,6915,0,0,8,0,110,110,8,40,0,40,,,,2013-08-12 14:00,2013-08-13 12:00,,2013-08-12 14:00,2013-08-13 12:00,2013-08-12 14:00,2013-08-13 12:00,2013-08-12 14:00,2013-08-13 12:00,2013-08-12 14:00,2013-08-13 12:00,,PT_Normal,,,,,k+rMm5U/SUihO6O1f14sCw,mxny6NnxS0WqeqW3LOiyPQ,,,Y,0,0,,,2013-11-05 11:09,2013-11-05 11:09,admin,admin,
762,102479,4512,26256,6590,0,N,N,N,CP_Drtn,TT_Task,DT_FixedDUR2,TK_NotStart,JF721.769,Tank Calibration,6965,0,0,8,0,110,110,8,40,0,40,,,,2013-08-13 12:00,2013-08-14 10:00,,2013-08-13 12:00,2013-08-14 10:00,2013-08-13 12:00,2013-08-14 10:00,2013-08-13 12:00,2013-08-14 10:00,2013-08-13 12:00,2013-08-14 10:00,,PT_Normal,,,,,BOTnf9UyqEiSI6Bq+cuPKA,t+QAezsxRUadM9hg+8O4jw,,,Y,0,0,,,2013-11-05 11:09,2013-11-05 11:09,admin,admin,
763,102480,4512,26257,6590,0,N,N,N,CP_Drtn,TT_Task,DT_FixedDUR2,TK_NotStart,JF721.770,Final Inspection & Hand over to client,6915,0,0,8,0,270,270,8,120,0,120,,,,2013-08-14 10:00,2013-08-15 08:00,,2013-08-14 10:00,2013-08-15 08:00,2013-08-14 10:00,2013-08-15 08:00,2013-08-14 10:00,2013-08-15 08:00,2013-08-14 10:00,2013-08-15 08:00,,PT_Normal,,,,,GbxHwbode0a1BQN9nVm8iQ,NxUQDchjrk+CZqM47f/HXw,,,Y,0,0,,,2013-11-05 11:09,2013-11-05 11:09,admin,admin,
764,102481,4512,26258,6590,0,N,N,N,CP_Drtn,TT_FinMile,DT_FixedDrtn,TK_NotStart,5.7,Complete MOBILIZATION of camp with Catering and accommodation facilities,,0,0,0,0,0,0,0,0,0,0,,,,2012-10-04 14:00,2012-10-04 14:00,,2012-10-04 14:00,2012-10-04 14:00,2012-10-04 14:00,2012-10-04 14:00,2012-10-04 14:00,2012-10-04 14:00,2012-10-04 14:00,2012-10-04 14:00,,PT_Normal,,,,,06wC9q5Ux0KInpCUtxS3gw,,,,Y,0,0,,,2013-11-05 11:09,2013-11-05 11:09,admin,admin,
765,102482,4512,26259,6590,0,N,N,N,CP_Drtn,TT_FinMile,DT_FixedDrtn,TK_NotStart,5.9,Complete COnstruction of Civil/Structural works,,0,0,0,0,0,0,0,0,0,0,,,,2012-11-20 10:00,2012-11-20 10:00,,2012-11-20 10:00,2012-11-20 10:00,2012-11-20 10:00,2012-11-20 10:00,2012-11-20 10:00,2012-11-20 10:00,2012-11-20 10:00,2012-11-20 10:00,,PT_Normal,,,,,V2XIc0H+bkyzUjJa3r1pWQ,,,,Y,0,0,,,2013-11-05 11:09,2013-11-05 11:09,admin,admin,
766,102483,4512,26260,6590,0,N,N,N,CP_Drtn,TT_FinMile,DT_FixedDrtn,TK_NotStart,2.E,MCC,,0,0,0,0,0,0,0,0,0,0,,,,2013-04-20 10:00,2013-04-20 10:00,,2013-04-20 10:00,2013-04-20 10:00,2013-04-20 10:00,2013-04-20 10:00,2013-04-20 10:00,2013-04-20 10:00,2013-04-20 10:00,2013-04-20 10:00,,PT_Normal,,,,,sIOyjhE8y0qjCdZ0EksVqw,,,,Y,0,0,,,2013-11-05 11:09,2013-11-05 11:09,admin,admin,
767,102484,4512,26261,6590,0,N,N,N,CP_Drtn,TT_FinMile,DT_FixedDrtn,TK_NotStart,4.E,Final Testing,,0,0,0,0,0,0,0,0,0,0,,,,2013-06-02 10:00,2013-06-02 10:00,,2013-06-02 10:00,2013-06-02 10:00,2013-06-02 10:00,2013-06-02 10:00,2013-06-02 10:00,2013-06-02 10:00,2013-06-02 10:00,2013-06-02 10:00,,PT_Normal,,,,,R6mfVZ9r4k+4y88EmwKoEA,,,,Y,0,0,,,2013-11-05 11:09,2013-11-05 11:09,admin,admin,
768,102485,4512,26262,6590,0,N,N,N,CP_Drtn,TT_FinMile,DT_FixedDrtn,TK_NotStart,5.10,Complete Installation,,0,0,0,0,0,0,0,0,0,0,,,,2013-08-11 08:00,2013-08-11 08:00,,2013-08-11 08:00,2013-08-11 08:00,2013-08-11 08:00,2013-08-11 08:00,2013-08-11 08:00,2013-08-11 08:00,2013-08-11 08:00,2013-08-11 08:00,,PT_Normal,,,,,HbD9JfzOhE6QX9CGwn1lJg,,,,Y,0,0,,,2013-11-05 11:09,2013-11-05 11:09,admin,admin,
769,102486,4512,26263,6590,0,N,N,N,CP_Drtn,TT_FinMile,DT_FixedDrtn,TK_NotStart,3.E,THird party testing,,0,0,0,0,0,0,0,0,0,0,,,,2013-08-14 10:00,2013-08-14 10:00,,2013-08-14 10:00,2013-08-14 10:00,2013-08-14 10:00,2013-08-14 10:00,2013-08-14 10:00,2013-08-14 10:00,2013-08-14 10:00,2013-08-14 10:00,,PT_Normal,,,,,oi2CMrSAlkGRLtJXSID3qg,,,,Y,0,0,,,2013-11-05 11:09,2013-11-05 11:09,admin,admin,
770,102487,4512,26264,6590,0,N,N,N,CP_Drtn,TT_FinMile,DT_FixedDrtn,TK_NotStart,6.E,Project Completion,,0,0,0,0,0,0,0,0,0,0,,,,2013-08-15 08:00,2013-08-15 08:00,,2013-08-15 08:00,2013-08-15 08:00,2013-08-15 08:00,2013-08-15 08:00,2013-08-15 08:00,2013-08-15 08:00,2013-08-15 08:00,2013-08-15 08:00,,PT_Normal,,,,,wrhL09SzGUSNklwK5I35TQ,,,,Y,0,0,,,2013-11-05 11:09,2013-11-05 11:09,admin,admin,
771,102488,4512,26266,6590,0,N,N,N,CP_Drtn,TT_Task,DT_FixedDrtn,TK_NotStart,JF721.617,Soil Investigation Works,6911,0,0,16,0,20,20,16,0,0,0,,,,2012-06-30 07:00,2012-07-01 13:00,,2012-06-30 07:00,2012-07-01 13:00,2012-06-30 07:00,2012-07-01 13:00,2012-06-30 07:00,2012-07-01 13:00,2012-06-30 07:00,2012-07-01 13:00,,PT_Normal,,,,,haj/5mfWskiz+fwTUiuuZg,6IaxD1vfKUukap+ip91LmA,,,Y,0,0,,,2013-11-05 11:09,2013-11-05 11:09,admin,admin,
772,102489,4512,26267,6590,0,N,N,N,CP_Drtn,TT_Task,DT_FixedDUR2,TK_NotStart,JF721.618,60% Submittal,6917,0,0,8,0,8,8,8,0,0,0,,,,2012-06-30 15:00,2012-07-01 13:00,,2012-06-30 15:00,2012-07-01 13:00,2012-06-30 15:00,2012-07-01 13:00,2012-06-30 15:00,2012-07-01 13:00,2012-06-30 15:00,2012-07-01 13:00,,PT_Normal,,,,,mvqh+MJDhkuA9oAvOusfzQ,ZJGmBxvMMkSBbZ3mHKFC5A,,,Y,0,0,,,2013-11-05 11:09,2013-11-05 11:09,admin,admin,
773,102490,4512,26267,6590,0,N,N,N,CP_Drtn,TT_Task,DT_FixedDUR2,TK_NotStart,JF721.619,60% Comments Incooperation,6917,0,0,56,0,56,56,56,0,0,0,,,,2012-07-01 13:00,2012-07-07 14:00,,2012-07-01 13:00,2012-07-07 14:00,2012-07-01 13:00,2012-07-07 14:00,2012-07-01 13:00,2012-07-07 14:00,2012-07-01 13:00,2012-07-07 14:00,,PT_Normal,,,,,/c1jx031PkGBNUtG/YZ8CQ,luFaTdpbc0K0Z2oi4sLc+A,,,Y,0,0,,,2013-11-05 11:09,2013-11-05 11:09,admin,admin,
774,102491,4512,26267,6590,0,N,N,N,CP_Drtn,TT_Task,DT_FixedDUR2,TK_NotStart,JF721.620,90% Submittal,6917,0,0,8,0,8,8,8,0,0,0,,,,2012-07-07 14:00,2012-07-08 12:00,,2012-07-07 14:00,2012-07-08 12:00,2012-07-07 14:00,2012-07-08 12:00,2012-07-07 14:00,2012-07-08 12:00,2012-07-07 14:00,2012-07-08 12:00,,PT_Normal,,,,,SrO4xXXrE0OI773AJyqPEA,kY6azt4BUUW4NLhndZDEmQ,,,Y,0,0,,,2013-11-05 11:09,2013-11-05 11:09,admin,admin,
775,102492,4512,26267,6590,0,N,N,N,CP_Drtn,TT_Task,DT_FixedDUR2,TK_NotStart,JF721.621,90% Comments Incooperation,6917,0,0,56,0,56,56,56,0,0,0,,,,2012-07-08 12:00,2012-07-14 13:00,,2012-07-08 12:00,2012-07-14 13:00,2012-07-08 12:00,2012-07-14 13:00,2012-07-08 12:00,2012-07-14 13:00,2012-07-08 12:00,2012-07-14 13:00,,PT_Normal,,,,,r+0cLNCqjEGUAOUNzMGp7w,5s/kh1Wp80aWKANGvg8KhQ,,,Y,0,0,,,2013-11-05 11:09,2013-11-05 11:09,admin,admin,
776,102493,4512,26267,6590,0,N,N,N,CP_Drtn,TT_Task,DT_FixedDUR2,TK_NotStart,JF721.622,IFC,6917,0,0,32,0,24,24,32,0,0,0,,,,2012-07-14 13:00,2012-07-17 15:00,,2012-07-14 13:00,2012-07-17 15:00,2012-07-14 13:00,2012-07-17 15:00,2012-07-14 13:00,2012-07-17 15:00,2012-07-14 13:00,2012-07-17 15:00,,PT_Normal,,,,,+vTdmwI5C0S6XrCO3DeHQw,FOCUI2aacEW/S3vj8rFDBw,,,Y,0,0,,,2013-11-05 11:09,2013-11-05 11:09,admin,admin,
777,102494,4512,26268,6590,0,N,N,N,CP_Drtn,TT_Task,DT_FixedDUR2,TK_NotStart,JF721.623,60% Submittal (Tank & Foundation Drawings),6917,0,0,8,0,24,24,8,0,0,0,,,,2012-07-17 15:00,2012-07-18 13:00,,2012-07-17 15:00,2012-07-18 13:00,2012-07-17 15:00,2012-07-18 13:00,2012-07-17 15:00,2012-07-18 13:00,2012-07-17 15:00,2012-07-18 13:00,,PT_Normal,,,,,MGMJGVDqlkKQDwyll27i1Q,SEkKM47C20OJhtxGVb6ytA,,,Y,0,0,,,2013-11-05 11:09,2013-11-05 11:09,admin,admin,
778,102495,4512,26268,6590,0,N,N,N,CP_Drtn,TT_Task,DT_FixedDUR2,TK_NotStart,JF721.624,60% Comments Incooperation (Tanks & Foundation Drawings),6917,0,0,40,0,120,120,40,0,0,0,,,,2012-07-18 13:00,2012-07-23 08:00,,2012-07-18 13:00,2012-07-23 08:00,2012-07-18 13:00,2012-07-23 08:00,2012-07-18 13:00,2012-07-23 08:00,2012-07-18 13:00,2012-07-23 08:00,,PT_Normal,,,,,fFNknQDaWUSPQDwlNKJw6Q,S6QhKv1Cc0OzhDst5GlzeQ,,,Y,0,0,,,2013-11-05 11:09,2013-11-05 11:09,admin,admin,
779,102496,4512,26268,6590,0,N,N,N,CP_Drtn,TT_Task,DT_FixedDUR2,TK_NotStart,JF721.625,90% Submittal (Tanks & Foundation Drawings),6912,0,0,8,0,24,24,8,0,0,0,,,,2012-07-23 08:00,2012-07-23 16:00,,2012-07-23 08:00,2012-07-23 16:00,2012-07-23 08:00,2012-07-23 16:00,2012-07-23 08:00,2012-07-23 16:00,2012-07-23 08:00,2012-07-23 16:00,,PT_Normal,,,,,EJxlA9QodkSI2rFaDyvApg,ETf93JjsZkSGj1NhScJUog,,,Y,0,0,,,2013-11-05 11:09,2013-11-05 11:09,admin,admin,
780,102497,4512,26268,6590,0,N,N,N,CP_Drtn,TT_Task,DT_FixedDUR2,TK_NotStart,JF721.626,90% Comments Incooperation (Tanks & Foundation Drawings),6912,0,0,16,0,48,48,16,0,0,0,,,,2012-07-23 16:00,2012-07-25 12:00,,2012-07-23 16:00,2012-07-25 12:00,2012-07-23 16:00,2012-07-25 12:00,2012-07-23 16:00,2012-07-25 12:00,2012-07-23 16:00,2012-07-25 12:00,,PT_Normal,,,,,iq7o2ZsXwUuufFpgWzTXlg,aylgMEThRUaGRSx4ItryOg,,,Y,0,0,,,2013-11-05 11:09,2013-11-05 11:09,admin,admin,
781,102498,4512,26268,6590,0,N,N,N,CP_Drtn,TT_Task,DT_FixedDUR2,TK_NotStart,JF721.627,IFC,6913,0,0,8,0,24,24,8,0,0,0,,,,2012-07-25 12:00,2012-07-26 10:00,,2012-07-25 12:00,2012-07-26 10:00,2012-07-25 12:00,2012-07-26 10:00,2012-07-25 12:00,2012-07-26 10:00,2012-07-25 12:00,2012-07-26 10:00,,PT_Normal,,,,,gahKS7VBgkebziD3bV/TKQ,z30+4i5xR0W2ej6zMvnlJQ,,,Y,0,0,,,2013-11-05 11:09,2013-11-05 11:09,admin,admin,
782,102499,4512,26269,6590,0,N,N,N,CP_Drtn,TT_FinMile,DT_FixedDrtn,TK_NotStart,5.1,Complete survey and Geotechnical Investigation for Ad-Duaihi Storage Facility.,,0,0,0,0,0,0,0,0,0,0,,,,2012-07-01 13:00,2012-07-01 13:00,,2012-07-01 13:00,2012-07-01 13:00,2012-07-01 13:00,2012-07-01 13:00,2012-07-01 13:00,2012-07-01 13:00,2012-07-01 13:00,2012-07-01 13:00,,PT_Normal,,,,,xMjS7nD+cUeRePqAXUKxAw,,,,Y,0,0,,,2013-11-05 11:09,2013-11-05 11:09,admin,admin,
783,102500,4512,26270,6590,0,N,N,N,CP_Drtn,TT_FinMile,DT_FixedDrtn,TK_NotStart,JF721.5.2,Complete Engineering design and Calculations,,0,0,0,0,0,0,0,0,0,0,,,,2012-07-17 15:00,2012-07-17 15:00,,2012-07-17 15:00,2012-07-17 15:00,2012-07-17 15:00,2012-07-17 15:00,2012-07-17 15:00,2012-07-17 15:00,2012-07-17 15:00,2012-07-17 15:00,,PT_Normal,,,,,KAcHlNY0akObCYYgp7E3yQ,,,,Y,0,0,,,2013-11-05 11:09,2013-11-05 11:09,admin,admin,
784,102501,4512,26271,6590,0,N,N,N,CP_Drtn,TT_FinMile,DT_FixedDrtn,TK_NotStart,5.3,Complete Fabrication and GA Drawing with Bill of Quantities,,0,0,0,0,0,0,0,0,0,0,,,,2012-07-26 10:00,2012-07-26 10:00,,2012-07-26 10:00,2012-07-26 10:00,2012-07-26 10:00,2012-07-26 10:00,2012-07-26 10:00,2012-07-26 10:00,2012-07-26 10:00,2012-07-26 10:00,,PT_Normal,,,,,YsgFbtGt+U2algaDq2BtmQ,,,,Y,0,0,,,2013-11-05 11:09,2013-11-05 11:09,admin,admin,
785,102502,4512,26273,6590,0,N,N,N,CP_Drtn,TT_Task,DT_FixedDUR2,TK_NotStart,JF721.628,PO Issued,,0,0,48,0,0,0,48,0,0,0,,,,2012-07-26 10:00,2012-07-31 13:00,,2012-07-26 10:00,2012-07-31 13:00,2012-07-26 10:00,2012-07-31 13:00,2012-07-26 10:00,2012-07-31 13:00,2012-07-26 10:00,2012-07-31 13:00,,PT_Normal,,,,,/4rpj78elUSnuDXa9TKnkw,6gAtGkktfk+fdG3zu24urg,,,Y,0,0,,,2013-11-05 11:09,2013-11-05 11:09,admin,admin,
786,102503,4512,26273,6590,0,N,N,N,CP_Drtn,TT_Task,DT_FixedDUR2,TK_NotStart,JF721.629,Ma'aden Site Delievery,,0,0,408,0,0,0,408,0,0,0,,,,2012-07-31 13:00,2012-09-16 16:00,,2012-07-31 13:00,2012-09-16 16:00,2012-07-31 13:00,2012-09-16 16:00,2012-07-31 13:00,2012-09-16 16:00,2012-07-31 13:00,2012-09-16 16:00,,PT_Normal,,,,,f17zXUmlyUKg8SxqXk2Wow,fYoh6gmQTkSvAAqfpQuE1g,,,Y,0,0,,,2013-11-05 11:09,2013-11-05 11:09,admin,admin,
787,102504,4512,26274,6590,0,N,N,N,CP_Drtn,TT_Task,DT_FixedDUR2,TK_NotStart,JF721.630,Approval for Vendor Drawings & SPecifications,,560,0,32,0,0,0,32,0,0,0,,,,2012-09-26 09:00,2012-09-29 16:00,,2012-07-24 14:00,2012-07-28 11:00,2012-07-24 14:00,2012-07-28 11:00,2012-07-24 14:00,2012-07-28 11:00,2012-09-26 09:00,2012-09-29 16:00,,PT_Normal,,,,,HcWCTHzpnUSTJKCSZxC0pg,ZiIWLFbsfEKPgdJ5amS+JQ,,,N,0,0,,,2013-11-05 11:09,2013-11-05 11:09,admin,admin,
788,102505,4512,26274,6590,0,N,N,N,CP_Drtn,TT_Task,DT_FixedDUR2,TK_NotStart,JF721.631,PO Issued,,991.983333,0,208,0,0,0,208,0,0,0,,,,2012-11-17 07:59,2012-12-09 10:59,,2012-07-28 11:00,2012-08-22 14:00,2012-07-28 11:00,2012-08-22 14:00,2012-07-28 11:00,2012-08-22 14:00,2012-11-17 07:59,2012-12-09 10:59,,PT_Normal,,,,,CJorLI9OVUiHPf6EnB3Ucg,B5p1U75juUK0y+yr/Iox2w,,,N,0,0,,,2013-11-05 11:09,2013-11-05 11:09,admin,admin,
789,102506,4512,26274,6590,0,N,N,N,CP_Drtn,TT_Task,DT_FixedDUR2,TK_NotStart,JF721.632,CP System Delievered to Ma'aden Site & Installed,6928,0,0,128,0,2340,2340,128,1040,0,1040,,,,2013-06-23 15:00,2013-07-07 13:00,,2013-06-23 15:00,2013-07-07 13:00,2013-06-23 15:00,2013-07-07 13:00,2013-06-23 15:00,2013-07-07 13:00,2013-06-23 15:00,2013-07-07 13:00,,PT_Normal,,,,,7812shFgy0i8/QfqxMrHNA,9D1G6BEB3EOqJytX9JzBGg,,,Y,0,0,,,2013-11-05 11:09,2013-11-05 11:09,admin,admin,
790,102507,4512,26274,6590,0,N,N,N,CP_Drtn,TT_Task,DT_FixedDUR2,TK_NotStart,JF721.633,Ma'aden CP Inspection,6966,0,0,24,0,180,180,24,120,0,120,,,,2013-07-07 13:00,2013-07-09 17:00,,2013-07-07 13:00,2013-07-09 17:00,2013-07-07 13:00,2013-07-09 17:00,2013-07-07 13:00,2013-07-09 17:00,2013-07-07 13:00,2013-07-09 17:00,,PT_Normal,,,,,Vu+tPGLCCUuRzyuMl86GTA,2N2ypLeCzEi1l6+GF/UAFg,,,Y,0,0,,,2013-11-05 11:09,2013-11-05 11:09,admin,admin,
791,102508,4512,26275,6590,0,N,N,N,CP_Drtn,TT_Task,DT_FixedDUR2,TK_NotStart,JF721.634,PO Issued,,512,0,16,0,0,0,16,0,0,0,,,,2012-11-12 13:00,2012-11-14 09:00,,2012-09-16 16:00,2012-09-18 12:00,2012-09-16 16:00,2012-09-18 12:00,2012-09-16 16:00,2012-09-18 12:00,2012-11-12 13:00,2012-11-14 09:00,,PT_Normal,,,,,9Nw5rRqalUCzwrNYpAfPOw,Rv2K34b2IEq081gsxfrsSg,,,N,0,0,,,2013-11-05 11:09,2013-11-05 11:09,admin,admin,
792,102509,4512,26275,6590,0,N,N,N,CP_Drtn,TT_Task,DT_FixedDUR2,TK_NotStart,JF721.635,Ma'aden Site Delievery,,512,0,56,0,0,0,56,0,0,0,,,,2012-11-14 09:00,2012-11-20 10:00,,2012-09-18 12:00,2012-09-24 13:00,2012-09-18 12:00,2012-09-24 13:00,2012-09-18 12:00,2012-09-24 13:00,2012-11-14 09:00,2012-11-20 10:00,,PT_Normal,,,,,GOXxw4xRMUGOvkKk1OWdGA,kdLYCIBwK0OhltjwMPTYBg,,,N,0,0,,,2013-11-05 11:09,2013-11-05 11:09,admin,admin,
793,102510,4512,26276,6590,0,N,N,N,CP_Drtn,TT_Task,DT_FixedDUR2,TK_NotStart,JF721.636,Approval For Vendor Drawings & Specifications,,560,0,32,0,0,0,32,0,0,0,,,,2012-09-26 09:00,2012-09-29 16:00,,2012-07-24 14:00,2012-07-28 11:00,2012-07-24 14:00,2012-07-28 11:00,2012-07-24 14:00,2012-07-28 11:00,2012-09-26 09:00,2012-09-29 16:00,,PT_Normal,,,,,gbHBQYvSqUmaTmS7RSdM1Q,J42k1FIzNESsEBuBKJBpCQ,,,N,0,0,,,2013-11-05 11:09,2013-11-05 11:09,admin,admin,
794,102511,4512,26276,6590,0,N,N,N,CP_Drtn,TT_Task,DT_FixedDUR2,TK_NotStart,JF721.637,P.O Issued,,1167.983333,176,32,0,0,0,32,0,0,0,,,,2012-12-05 13:59,2012-12-09 10:59,,2012-07-28 11:00,2012-07-31 13:00,2012-07-28 11:00,2012-07-31 13:00,2012-07-28 11:00,2012-07-31 13:00,2012-12-05 13:59,2012-12-09 10:59,,PT_Normal,,,,,N204EZlpjESj+rQzLZIrPA,ytI5jl6k50eoEYxgXSQwaw,,,N,0,0,,,2013-11-05 11:09,2013-11-05 11:09,admin,admin,
795,102512,4512,26277,6590,0,N,N,N,CP_Drtn,TT_Task,DT_FixedDUR2,TK_NotStart,JF721.638,Approval for vendor Drawings & Specifcations,,560,0,24,0,0,0,24,0,0,0,,,,2012-09-26 09:00,2012-09-29 08:00,,2012-07-24 14:00,2012-07-27 10:30,2012-07-24 14:00,2012-07-27 10:30,2012-07-24 14:00,2012-07-27 10:30,2012-09-26 09:00,2012-09-29 08:00,,PT_Normal,,,,,9mZxEDDQhUuZPlrZw73UYA,vGZQSv9mn0SU4DnHw62fUQ,,,N,0,0,,,2013-11-05 11:09,2013-11-05 11:09,admin,admin,
796,102513,4512,26277,6590,0,N,N,N,CP_Drtn,TT_Task,DT_FixedDUR2,TK_NotStart,JF721.639,P.O Issued,,1151.983333,160,56,0,0,0,56,0,0,0,,,,2012-12-03 09:59,2012-12-09 10:59,,2012-07-27 10:30,2012-08-02 09:00,2012-07-27 10:30,2012-08-02 09:00,2012-07-27 10:30,2012-08-02 09:00,2012-12-03 09:59,2012-12-09 10:59,,PT_Normal,,,,,vROAo1k7XEiG3zJOmC+awg,XkxIx92hF0+v0meYZPh7lA,,,N,0,0,,,2013-11-05 11:09,2013-11-05 11:09,admin,admin,
797,102514,4512,26277,6590,0,N,N,N,CP_Drtn,TT_Task,DT_FixedDUR2,TK_NotStart,JF721.640,Instrumentation Delievered to Ma'aden & Installed,6951,0,0,200,0,1170,1170,200,520,0,520,,,,2013-07-10 07:00,2013-07-31 12:00,,2013-07-10 07:00,2013-07-31 12:00,2013-07-10 07:00,2013-07-31 12:00,2013-07-10 07:00,2013-07-31 12:00,2013-07-10 07:00,2013-07-31 12:00,,PT_Normal,,,,,EXBJE7RefECo3vQNW0tumw,EJPeriTEe0CDFDev9u4cMg,,,Y,0,0,,,2013-11-05 11:09,2013-11-05 11:09,admin,admin,
798,102515,4512,26277,6590,0,N,N,N,CP_Drtn,TT_Task,DT_FixedDUR2,TK_NotStart,JF721.641,Ma'aden Instrumentation Inspection,6951,0,0,40,0,80,80,40,40,0,40,,,,2013-07-31 12:00,2013-08-04 17:00,,2013-07-31 12:00,2013-08-04 17:00,2013-07-31 12:00,2013-08-04 17:00,2013-07-31 12:00,2013-08-04 17:00,2013-07-31 12:00,2013-08-04 17:00,,PT_Normal,,,,,qV8V13Jdckm1NdzTKndFAw,57AgxCshQUCvtq7dzOYAKw,,,Y,0,0,,,2013-11-05 11:09,2013-11-05 11:09,admin,admin,
799,102516,4512,26278,6590,0,N,N,N,CP_Drtn,TT_Task,DT_FixedDUR2,TK_NotStart,JF721.642,Approve Vendor Drawings & Specifcations,,376,0,16,0,0,0,16,0,0,0,,,,2012-08-30 11:00,2012-09-01 12:00,,2012-07-17 15:00,2012-07-19 11:00,2012-07-17 15:00,2012-07-19 11:00,2012-07-17 15:00,2012-07-19 11:00,2012-08-30 11:00,2012-09-01 12:00,,PT_Normal,,,,,Q3o0BYEuQ0aV5du6iQ+dXA,ukGWBNqu2EOxSGUnQjZVRg,,,N,0,0,,,2013-11-05 11:09,2013-11-05 11:09,admin,admin,
800,102517,4512,26278,6590,0,N,N,N,CP_Drtn,TT_Task,DT_FixedDUR2,TK_NotStart,JF721.643,P.O Issued,,376,0,16,0,0,0,16,0,0,0,,,,2012-09-01 12:00,2012-09-03 08:00,,2012-07-19 11:00,2012-07-21 12:00,2012-07-19 11:00,2012-07-21 12:00,2012-07-19 11:00,2012-07-21 12:00,2012-09-01 12:00,2012-09-03 08:00,,PT_Normal,,,,,taT/XOeZMU+n+iykVhhd3g,NxHr8FPlykizwv+fFkhB7w,,,N,0,0,,,2013-11-05 11:09,2013-11-05 11:09,admin,admin,
801,102518,4512,26279,6590,0,N,N,N,CP_Drtn,TT_Task,DT_FixedDUR2,TK_NotStart,JF721.644,Approval for Vendor Drawings & Specifications,,560,0,40,0,0,0,40,0,0,0,,,,2012-09-29 08:00,2012-10-03 08:00,,2012-07-27 10:30,2012-07-31 13:00,2012-07-27 10:30,2012-07-31 13:00,2012-07-27 10:30,2012-07-31 13:00,2012-09-29 08:00,2012-10-03 08:00,,PT_Normal,,,,,ZriTQ2O0FEmRZpSvN4vknA,DUZ4p+Ubw0C3E8pd3xdA7A,,,N,0,0,,,2013-11-05 11:09,2013-11-05 11:09,admin,admin,
802,102519,4512,26279,6590,0,N,N,N,CP_Drtn,TT_Task,DT_FixedDUR2,TK_NotStart,JF721.645,PO  Issued,,1288,0,40,0,0,0,40,0,0,0,,,,2012-12-22 11:00,2012-12-26 11:00,,2012-07-31 13:00,2012-08-05 08:00,2012-07-31 13:00,2012-08-05 08:00,2012-07-31 13:00,2012-08-05 08:00,2012-12-22 11:00,2012-12-26 11:00,,PT_Normal,,,,,mqnBzvHJ9020u8Jlg4AYDQ,1beg9gcBqECwlOKerVFmtQ,,,N,0,0,,,2013-11-05 11:09,2013-11-05 11:09,admin,admin,
803,102520,4512,26280,6590,0,N,N,N,CP_Drtn,TT_Task,DT_FixedDUR2,TK_NotStart,JF721.646,Approval for Vendor Drawings & Specifications,,560,0,40,0,0,0,40,0,0,0,,,,2012-09-29 08:00,2012-10-03 08:00,,2012-07-27 10:30,2012-07-31 13:00,2012-07-27 10:30,2012-07-31 13:00,2012-07-27 10:30,2012-07-31 13:00,2012-09-29 08:00,2012-10-03 08:00,,PT_Normal,,,,,+kDgfSf/lkqvDVC25VLNtA,UF2eTN9GlE2WNlYJGLrq8g,,,N,0,0,,,2013-11-05 11:09,2013-11-05 11:09,admin,admin,
804,102521,4512,26280,6590,0,N,N,N,CP_Drtn,TT_Task,DT_FixedDUR2,TK_NotStart,JF721.647,PO issued,,560,0,40,0,0,0,40,0,0,0,,,,2012-10-03 08:00,2012-10-07 13:00,,2012-07-31 13:00,2012-08-05 08:00,2012-07-31 13:00,2012-08-05 08:00,2012-07-31 13:00,2012-08-05 08:00,2012-10-03 08:00,2012-10-07 13:00,,PT_Normal,,,,,hlMhO4zIz0WUAM6Jhfz6BA,zZbpF6kNYUOp171WTe1QdQ,,,N,0,0,,,2013-11-05 11:09,2013-11-05 11:09,admin,admin,
805,102522,4512,26281,6590,0,N,N,N,CP_Drtn,TT_Task,DT_FixedDUR2,TK_NotStart,JF721.648,Approval For vendor Specifcations,,888,0,56,0,0,0,56,0,0,0,,,,2012-11-08 16:00,2012-11-14 17:00,,2012-07-31 13:00,2012-08-06 14:00,2012-07-31 13:00,2012-08-06 14:00,2012-07-31 13:00,2012-08-06 14:00,2012-11-08 16:00,2012-11-14 17:00,,PT_Normal,,,,,XRsXKKCENUGg8ZXh++zaTA,v37rRuq8J0Cq4aK5WDAbHw,,,N,0,0,,,2013-11-05 11:09,2013-11-05 11:09,admin,admin,
806,102523,4512,26281,6590,0,N,N,N,CP_Drtn,TT_Task,DT_FixedDUR2,TK_NotStart,JF721.649,PO issued,,888,0,24,0,0,0,24,0,0,0,,,,2012-11-15 07:00,2012-11-17 16:00,,2012-08-06 14:00,2012-08-09 08:00,2012-08-06 14:00,2012-08-09 08:00,2012-08-06 14:00,2012-08-09 08:00,2012-11-15 07:00,2012-11-17 16:00,,PT_Normal,,,,,B4MNUE92HEq7PC/Z0hXBXQ,GmCqBin2IEG3efX1c1MDVA,,,N,0,0,,,2013-11-05 11:09,2013-11-05 11:09,admin,admin,
807,102524,4512,26282,6590,0,N,N,N,CP_Drtn,TT_Task,DT_FixedDUR2,TK_NotStart,JF721.650,Plates,,376,0,728.016667,0,0,0,728.016667,0,0,0,,,,2012-09-03 08:00,2012-11-21 16:01,,2012-07-21 12:00,2012-10-10 15:01,2012-07-21 12:00,2012-10-10 15:01,2012-07-21 12:00,2012-10-10 15:01,2012-09-03 08:00,2012-11-21 16:01,,PT_Normal,,,,,RrvbBJVhVUOjYNNkqIVh9Q,7BB6zyUsO0KqmWA7Z4cxoA,,,N,0,0,,,2013-11-05 11:09,2013-11-05 11:09,admin,admin,
808,102525,4512,26282,6590,0,N,N,N,CP_Drtn,TT_Task,DT_FixedDUR2,TK_NotStart,JF721.651,Profile Material,,1288,272,248,0,0,0,248,0,0,0,,,,2012-12-26 11:00,2013-01-22 09:00,,2012-08-05 08:00,2012-09-03 16:00,2012-08-05 08:00,2012-09-03 16:00,2012-08-05 08:00,2012-09-03 16:00,2012-12-26 11:00,2013-01-22 09:00,,PT_Normal,,,,,s7Q797e+YkaQ8lEmWl9V+A,zrw2BoieRkSuVRH/S1w1HQ,,,N,0,0,,,2013-11-05 11:09,2013-11-05 11:09,admin,admin,
809,102526,4512,26282,6590,0,N,N,N,CP_Drtn,TT_Task,DT_FixedDUR2,TK_NotStart,JF721.652,Pipes & Fittings,,560,0,368,0,0,0,368,0,0,0,,,,2012-10-07 13:00,2012-11-17 16:00,,2012-08-05 08:00,2012-09-16 16:00,2012-08-05 08:00,2012-09-16 16:00,2012-08-05 08:00,2012-09-16 16:00,2012-10-07 13:00,2012-11-17 16:00,,PT_Normal,,,,,LFktEEwK/EO+r6r2TWZWYw,N+UUB+TkU0C3/DYVm4RjNQ,,,N,0,0,,,2013-11-05 11:09,2013-11-05 11:09,admin,admin,
810,102527,4512,26283,6590,0,N,N,N,CP_Drtn,TT_Task,DT_FixedDUR2,TK_NotStart,JF721.653,Define Layout,,376,0,32,0,0,0,32,0,0,0,,,,2012-10-28 09:00,2012-10-31 11:00,,2012-09-16 08:00,2012-09-19 10:00,2012-09-16 08:00,2012-09-19 10:00,2012-09-16 08:00,2012-09-19 10:00,2012-10-28 09:00,2012-10-31 11:00,,PT_Normal,,,,,lo0bn1/VLES2IL8NVs228Q,mxw70NktA0aOM+4xlmPsdQ,,,N,0,0,,,2013-11-05 11:09,2013-11-05 11:09,admin,admin,
811,102528,4512,26283,6590,0,N,N,N,CP_Drtn,TT_Task,DT_FixedDUR2,TK_NotStart,JF721.654,Cutting,,376,0,64,0,0,0,64,0,0,0,,,,2012-10-28 09:00,2012-11-04 08:00,,2012-09-16 08:00,2012-09-22 17:00,2012-09-16 08:00,2012-09-22 17:00,2012-09-16 08:00,2012-09-22 17:00,2012-10-28 09:00,2012-11-04 08:00,,PT_Normal,,,,,074PBXfQHUeVveKMT9q7aQ,PX4+TjQmOUK6DJNEL8qR+Q,,,N,0,0,,,2013-11-05 11:09,2013-11-05 11:09,admin,admin,
812,102529,4512,26283,6590,0,N,N,N,CP_Drtn,TT_Task,DT_FixedDUR2,TK_NotStart,JF721.655,Fit-up,,376,0,56,0,0,0,56,0,0,0,,,,2012-11-01 09:00,2012-11-07 10:00,,2012-09-20 08:00,2012-09-26 09:00,2012-09-20 08:00,2012-09-26 09:00,2012-09-20 08:00,2012-09-26 09:00,2012-11-01 09:00,2012-11-07 10:00,,PT_Normal,,,,,HXOb4WtAgUKuEoh4mAYm/g,ls7VwBmWQkm8Jgdan0INHA,,,N,0,0,,,2013-11-05 11:09,2013-11-05 11:09,admin,admin,
813,102530,4512,26283,6590,0,N,N,N,CP_Drtn,TT_Task,DT_FixedDUR2,TK_NotStart,JF721.656,Welding,,376,0,64,0,0,0,64,0,0,0,,,,2012-11-03 10:00,2012-11-10 09:00,,2012-09-22 09:00,2012-09-29 08:00,2012-09-22 09:00,2012-09-29 08:00,2012-09-22 09:00,2012-09-29 08:00,2012-11-03 10:00,2012-11-10 09:00,,PT_Normal,,,,,OLmI6+0NjkKfLThpdykMdg,bL4UTis9HE+PTaLTceqgxg,,,N,0,0,,,2013-11-05 11:09,2013-11-05 11:09,admin,admin,
814,102531,4512,26283,6590,0,N,N,N,CP_Drtn,TT_Task,DT_FixedDUR2,TK_NotStart,JF721.657,Shop Blasting/Painting,,376,0,56,0,0,0,56,0,0,0,,,,2012-11-06 12:00,2012-11-12 13:00,,2012-09-25 11:00,2012-10-01 12:00,2012-09-25 11:00,2012-10-01 12:00,2012-09-25 11:00,2012-10-01 12:00,2012-11-06 12:00,2012-11-12 13:00,,PT_Normal,,,,,v5ITLL6asE6Z90AUEZlghQ,W0UKf1OH/066DYQHOyiElQ,,,N,0,0,,,2013-11-05 11:09,2013-11-05 11:09,admin,admin,
815,102532,4512,26283,6590,0,N,N,N,CP_Drtn,TT_Task,DT_FixedDUR2,TK_NotStart,JF721.658,Inspect & Accept for use,,376,0,16,0,0,0,16,0,0,0,,,,2012-11-12 13:00,2012-11-14 09:00,,2012-10-01 12:00,2012-10-03 08:00,2012-10-01 12:00,2012-10-03 08:00,2012-10-01 12:00,2012-10-03 08:00,2012-11-12 13:00,2012-11-14 09:00,,PT_Normal,,,,,iucDrS1QNEqT2PuNPv4c0A,DRsy+DgRvU6lBO9eL7SORg,,,N,0,0,,,2013-11-05 11:09,2013-11-05 11:09,admin,admin,
816,102533,4512,26284,6590,0,N,N,N,CP_Drtn,TT_Task,DT_FixedDUR2,TK_NotStart,JF721.659,Define Layout,,688,0,56,0,0,0,56,0,0,0,,,,2012-12-04 08:00,2012-12-10 09:00,,2012-09-19 10:00,2012-09-25 11:00,2012-09-19 10:00,2012-09-25 11:00,2012-09-19 10:00,2012-09-25 11:00,2012-12-04 08:00,2012-12-10 09:00,,PT_Normal,,,,,QfzS7IlcwEqUopjoWahhmA,FUQ/UdV29EWyR2+FSajmnA,,,N,0,0,,,2013-11-05 11:09,2013-11-05 11:09,admin,admin,
817,102534,4512,26284,6590,0,N,N,N,CP_Drtn,TT_Task,DT_FixedDUR2,TK_NotStart,JF721.660,Cutting,,688,0,128,0,0,0,128,0,0,0,,,,2012-12-04 08:00,2012-12-17 16:00,,2012-09-19 10:00,2012-10-03 08:00,2012-09-19 10:00,2012-10-03 08:00,2012-09-19 10:00,2012-10-03 08:00,2012-12-04 08:00,2012-12-17 16:00,,PT_Normal,,,,,ZH6GtER8gkSXW6iHGLIYLg,UgF2iCfBq0K6PVj2CGY6/w,,,N,0,0,,,2013-11-05 11:09,2013-11-05 11:09,admin,admin,
818,102535,4512,26284,6590,0,N,N,N,CP_Drtn,TT_Task,DT_FixedDUR2,TK_NotStart,JF721.661,Bevelling/Rolling,,688,0,128,0,0,0,128,0,0,0,,,,2012-12-07 12:30,2012-12-21 10:30,,2012-09-23 07:00,2012-10-06 15:00,2012-09-23 07:00,2012-10-06 15:00,2012-09-23 07:00,2012-10-06 15:00,2012-12-07 12:30,2012-12-21 10:30,,PT_Normal,,,,,THYcHEuw0EWzZ5DSVLk1ig,S02mIPEVYkK8oMO9W4AWkw,,,N,0,0,,,2013-11-05 11:09,2013-11-05 11:09,admin,admin,
819,102536,4512,26284,6590,0,N,N,N,CP_Drtn,TT_Task,DT_FixedDUR2,TK_NotStart,JF721.662,Shop Blasting/Painting,,688,0,168,0,0,0,168,0,0,0,,,,2012-12-11 15:00,2012-12-30 08:00,,2012-09-27 07:00,2012-10-15 10:00,2012-09-27 07:00,2012-10-15 10:00,2012-09-27 07:00,2012-10-15 10:00,2012-12-11 15:00,2012-12-30 08:00,,PT_Normal,,,,,xQ8MxewZJUSS8RwawKTW5g,R1h4/VBmLkiBW8eSOm59Pg,,,N,0,0,,,2013-11-05 11:09,2013-11-05 11:09,admin,admin,
820,102537,4512,26284,6590,0,N,N,N,CP_Drtn,TT_Task,DT_FixedDUR2,TK_NotStart,JF721.663,Inspect & Accept for use,,688,0,24,0,0,0,24,0,0,0,,,,2012-12-30 08:00,2013-01-01 12:00,,2012-10-15 10:00,2012-10-17 14:00,2012-10-15 10:00,2012-10-17 14:00,2012-10-15 10:00,2012-10-17 14:00,2012-12-30 08:00,2013-01-01 12:00,,PT_Normal,,,,,tB1vAdjXX0GSyxAvubyLcg,YBVP68BJjUmfODwENE+svQ,,,N,0,0,,,2013-11-05 11:09,2013-11-05 11:09,admin,admin,
821,102538,4512,26285,6590,0,N,N,N,CP_Drtn,TT_Task,DT_FixedDUR2,TK_NotStart,JF721.664,Define layout,,1016,0,24,0,0,0,24,0,0,0,,,,2013-01-22 09:00,2013-01-24 13:00,,2012-10-03 08:00,2012-10-05 14:30,2012-10-03 08:00,2012-10-05 14:30,2012-10-03 08:00,2012-10-05 14:30,2013-01-22 09:00,2013-01-24 13:00,,PT_Normal,,,,,lWrysQh6OUWf2n6UMuzkjQ,w3G7PXi+E06GeLvXYgrelA,,,N,0,0,,,2013-11-05 11:09,2013-11-05 11:09,admin,admin,
822,102539,4512,26285,6590,0,N,N,N,CP_Drtn,TT_Task,DT_FixedDUR2,TK_NotStart,JF721.665,Cutting,,1016,0,40,0,0,0,40,0,0,0,,,,2013-01-24 13:00,2013-01-28 10:00,,2012-10-06 07:00,2012-10-09 17:00,2012-10-06 07:00,2012-10-09 17:00,2012-10-06 07:00,2012-10-09 17:00,2013-01-24 13:00,2013-01-28 10:00,,PT_Normal,,,,,JC5bvY9uO0yZusSwOZrXjg,zrSzfjuKgEi/4kwAHcaT8g,,,N,0,0,,,2013-11-05 11:09,2013-11-05 11:09,admin,admin,
823,102540,4512,26285,6590,0,N,N,N,CP_Drtn,TT_Task,DT_FixedDUR2,TK_NotStart,JF721.666,Bevelling,,1016,0,48,0,0,0,48,0,0,0,,,,2013-01-26 14:00,2013-01-30 14:00,,2012-10-07 13:00,2012-10-12 13:30,2012-10-07 13:00,2012-10-12 13:30,2012-10-07 13:00,2012-10-12 13:30,2013-01-26 14:00,2013-01-30 14:00,,PT_Normal,,,,,0iKGEDZqF0iodYd3y/k4gw,7yxvUkoSZEyS6UxEX5iF6A,,,N,0,0,,,2013-11-05 11:09,2013-11-05 11:09,admin,admin,
824,102541,4512,26285,6590,0,N,N,N,CP_Drtn,TT_Task,DT_FixedDUR2,TK_NotStart,JF721.667,Fit-up/Welding,,1016,0,104,0,0,0,104,0,0,0,,,,2013-01-28 10:00,2013-02-08 11:30,,2012-10-10 07:00,2012-10-21 11:00,2012-10-10 07:00,2012-10-21 11:00,2012-10-10 07:00,2012-10-21 11:00,2013-01-28 10:00,2013-02-08 11:30,,PT_Normal,,,,,QVJEYUNORUyu8WHt19WnQQ,LwL11e5CV02X51p0WSpDoQ,,,N,0,0,,,2013-11-05 11:09,2013-11-05 11:09,admin,admin,
825,102542,4512,26285,6590,0,N,N,N,CP_Drtn,TT_Task,DT_FixedDUR2,TK_NotStart,JF721.668,Blasting/Painting,,1016,0,72,0,0,0,72,0,0,0,,,,2013-02-03 11:00,2013-02-11 08:00,,2012-10-16 08:00,2012-10-23 15:00,2012-10-16 08:00,2012-10-23 15:00,2012-10-16 08:00,2012-10-23 15:00,2013-02-03 11:00,2013-02-11 08:00,,PT_Normal,,,,,FoW6mEVbEECyyy8c2wm73Q,Wf3sumOy5UW0AmVfp4d1Og,,,N,0,0,,,2013-11-05 11:09,2013-11-05 11:09,admin,admin,
826,102543,4512,26285,6590,0,N,N,N,CP_Drtn,TT_Task,DT_FixedDUR2,TK_NotStart,JF721.669,Inspect & Accept for use,,1016,0,16,0,0,0,16,0,0,0,,,,2013-02-11 08:00,2013-02-12 14:00,,2012-10-23 15:00,2012-10-25 11:00,2012-10-23 15:00,2012-10-25 11:00,2012-10-23 15:00,2012-10-25 11:00,2013-02-11 08:00,2013-02-12 14:00,,PT_Normal,,,,,FleEyyyI9UW2KrAuVKN63Q,MnJyf739TUaF/k71RebwFA,,,N,0,0,,,2013-11-05 11:09,2013-11-05 11:09,admin,admin,
827,102544,4512,26286,6590,0,N,N,N,CP_Drtn,TT_Task,DT_FixedDUR2,TK_NotStart,JF721.670,Define Layout,,1192,0,32,0,0,0,32,0,0,0,,,,2013-02-27 10:00,2013-03-02 17:00,,2012-10-21 11:00,2012-10-24 13:00,2012-10-21 11:00,2012-10-24 13:00,2012-10-21 11:00,2012-10-24 13:00,2013-02-27 10:00,2013-03-02 17:00,,PT_Normal,,,,,usZ6/+dKi0yJ5ms/EMbTyg,xu+EFonkYkyAAWCadAF29Q,,,N,0,0,,,2013-11-05 11:09,2013-11-05 11:09,admin,admin,
828,102545,4512,26286,6590,0,N,N,N,CP_Drtn,TT_Task,DT_FixedDUR2,TK_NotStart,JF721.671,Cutting,,1192,0,48,0,0,0,48,0,0,0,,,,2013-03-03 07:00,2013-03-07 15:00,,2012-10-24 13:00,2012-10-31 11:00,2012-10-24 13:00,2012-10-31 11:00,2012-10-24 13:00,2012-10-31 11:00,2013-03-03 07:00,2013-03-07 15:00,,PT_Normal,,,,,rlnPWneKoEqNek6BETr1Cw,V/kEsMKOQ0GqI3SVeH8lXw,,,N,0,0,,,2013-11-05 11:09,2013-11-05 11:09,admin,admin,
829,102546,4512,26286,6590,0,N,N,N,CP_Drtn,TT_Task,DT_FixedDUR2,TK_NotStart,JF721.672,Fit-Up,,1192,0,72,0,0,0,72,0,0,0,,,,2013-03-07 15:00,2013-03-15 14:30,,2012-10-31 11:00,2012-11-08 08:00,2012-10-31 11:00,2012-11-08 08:00,2012-10-31 11:00,2012-11-08 08:00,2013-03-07 15:00,2013-03-15 14:30,,PT_Normal,,,,,AP5WGnL9kkKKjm2nsRiw6A,RL5q5N6my06hnuJgayQcfQ,,,N,0,0,,,2013-11-05 11:09,2013-11-05 11:09,admin,admin,
830,102547,4512,26286,6590,0,N,N,N,CP_Drtn,TT_Task,DT_FixedDUR2,TK_NotStart,JF721.673,Welding,,1192,0,88,0,0,0,88,0,0,0,,,,2013-03-20 07:00,2013-03-29 12:30,,2012-11-12 13:00,2012-11-21 16:00,2012-11-12 13:00,2012-11-21 16:00,2012-11-12 13:00,2012-11-21 16:00,2013-03-20 07:00,2013-03-29 12:30,,PT_Normal,,,,,NBSS5O0DLEuCVz6y0ehg7w,uTbSKvVRQke8bnkZogQDAA,,,N,0,0,,,2013-11-05 11:09,2013-11-05 11:09,admin,admin,
831,102548,4512,26286,6590,0,N,N,N,CP_Drtn,TT_Task,DT_FixedDUR2,TK_NotStart,JF721.674,Blasting/Painting,,1192,0,88,0,0,0,88,0,0,0,,,,2013-03-25 10:00,2013-04-03 13:00,,2012-11-17 16:00,2012-11-27 09:00,2012-11-17 16:00,2012-11-27 09:00,2012-11-17 16:00,2012-11-27 09:00,2013-03-25 10:00,2013-04-03 13:00,,PT_Normal,,,,,YlPl6dEu4UqiOdLnzg2KqQ,K+t8YLeZFkKAmq4f/af1dw,,,N,0,0,,,2013-11-05 11:09,2013-11-05 11:09,admin,admin,
832,102549,4512,26286,6590,0,N,N,N,CP_Drtn,TT_Task,DT_FixedDUR2,TK_NotStart,JF721.675,Inspect & Accept for use,,1192,0,24,0,0,0,24,0,0,0,,,,2013-04-03 13:00,2013-04-06 12:00,,2012-11-27 09:00,2012-11-29 13:00,2012-11-27 09:00,2012-11-29 13:00,2012-11-27 09:00,2012-11-29 13:00,2013-04-03 13:00,2013-04-06 12:00,,PT_Normal,,,,,agAe86tYQkyrr5iEbCsv8w,E+VTwbc91Uqtneta3hBipQ,,,N,0,0,,,2013-11-05 11:09,2013-11-05 11:09,admin,admin,
833,102550,4512,26287,6590,0,N,N,N,CP_Drtn,TT_Task,DT_FixedDUR2,TK_NotStart,JF721.676,"Annular,Bottom & Sump",,376,376,56,0,0,0,56,0,0,0,,,,2012-11-14 09:00,2012-11-20 10:00,,2012-10-03 08:00,2012-10-09 09:00,2012-10-03 08:00,2012-10-09 09:00,2012-10-03 08:00,2012-10-09 09:00,2012-11-14 09:00,2012-11-20 10:00,,PT_Normal,,,,,hni2CEfHGEqMVDVF6MDZMw,drtGpP++2EOYt8XPCSMUOg,,,N,0,0,,,2013-11-05 11:09,2013-11-05 11:09,admin,admin,
834,102551,4512,26287,6590,0,N,N,N,CP_Drtn,TT_Task,DT_FixedDUR2,TK_NotStart,JF721.677,"Shell Courses #1,#2,#3,#4",,688,688,104,0,0,0,104,0,0,0,,,,2013-01-01 12:00,2013-01-12 16:00,,2012-10-17 14:00,2012-10-30 13:00,2012-10-17 14:00,2012-10-30 13:00,2012-10-17 14:00,2012-10-30 13:00,2013-01-01 12:00,2013-01-12 16:00,,PT_Normal,,,,,5ic6BXOmSUCMYPZNLgyKUw,nZE05kWf5UK4rEv9fxk8pw,,,N,0,0,,,2013-11-05 11:09,2013-11-05 11:09,admin,admin,
835,102552,4512,26287,6590,0,N,N,N,CP_Drtn,TT_Task,DT_FixedDUR2,TK_NotStart,JF721.678,Shell Nozzles & Manholes,,1016,1016,40,0,0,0,40,0,0,0,,,,2013-02-12 14:00,2013-02-17 09:00,,2012-10-25 11:00,2012-10-31 11:00,2012-10-25 11:00,2012-10-31 11:00,2012-10-25 11:00,2012-10-31 11:00,2013-02-12 14:00,2013-02-17 09:00,,PT_Normal,,,,,or7th28yFEC0b//9eDdPAQ,fvdwYjkpkkOkv15B5Usf9w,,,N,0,0,,,2013-11-05 11:09,2013-11-05 11:09,admin,admin,
836,102553,4512,26287,6590,0,N,N,N,CP_Drtn,TT_Task,DT_FixedDUR2,TK_NotStart,JF721.679,"Platforms,Stairs & Handrails",,1192,1192,56,0,0,0,56,0,0,0,,,,2013-04-06 12:00,2013-04-12 10:30,,2012-11-29 13:00,2012-12-05 14:00,2012-11-29 13:00,2012-12-05 14:00,2012-11-29 13:00,2012-12-05 14:00,2013-04-06 12:00,2013-04-12 10:30,,PT_Normal,,,,,AuqId3BW20+Mz+iYF3Sekg,sJSlKx11kEuhlj39lJjFlg,,,N,0,0,,,2013-11-05 11:09,2013-11-05 11:09,admin,admin,
837,102554,4512,26287,6590,0,N,N,N,CP_Drtn,TT_Task,DT_FixedDUR2,TK_NotStart,JF721.680,Pipes & Fittings,,560,48,24,0,0,0,24,0,0,0,,,,2012-11-17 16:00,2012-11-20 10:00,,2012-09-16 16:00,2012-09-19 10:00,2012-09-16 16:00,2012-09-19 10:00,2012-09-16 16:00,2012-09-19 10:00,2012-11-17 16:00,2012-11-20 10:00,,PT_Normal,,,,,YR2dJCeFuE69eBekHaq7Cg,fCV9meug2EOcR25AFz3hng,,,N,0,0,,,2013-11-05 11:09,2013-11-05 11:09,admin,admin,
838,102555,4512,26287,6590,0,N,N,N,CP_Drtn,TT_Task,DT_FixedDUR2,TK_NotStart,JF721.681,Aluminum Dome Roof,,991.983333,991.983333,728.016667,0,0,0,728.016667,0,0,0,,,,2012-12-09 10:59,2013-02-24 16:00,,2012-08-22 14:00,2012-11-11 07:01,2012-08-22 14:00,2012-11-11 07:01,2012-08-22 14:00,2012-11-11 07:01,2012-12-09 10:59,2013-02-24 16:00,,PT_Normal,,,,,Cx59IhnSzUaMbq6efde53g,c3H83v8ZcEqoPn8G/L04vQ,,,N,0,0,,,2013-11-05 11:09,2013-11-05 11:09,admin,admin,
839,102556,4512,26287,6590,0,N,N,N,CP_Drtn,TT_Task,DT_FixedDUR2,TK_NotStart,JF721.682,Paint Material,,888,376,24,0,0,0,24,0,0,0,,,,2012-11-17 16:00,2012-11-20 10:00,,2012-08-09 08:00,2012-08-11 17:00,2012-08-09 08:00,2012-08-11 17:00,2012-08-09 08:00,2012-08-11 17:00,2012-11-17 16:00,2012-11-20 10:00,,PT_Normal,,,,,EHMu4S2TEU+SDg8w3ym6EQ,glCpxESIn0KWFaoqZufLkg,,,N,0,0,,,2013-11-05 11:09,2013-11-05 11:09,admin,admin,
840,102557,4512,26288,6590,0,N,N,N,CP_Drtn,TT_FinMile,DT_FixedDrtn,TK_NotStart,5.6,Purchase Order placement for Major Materials,,991.983333,0,0,0,0,0,0,0,0,0,,,,2012-12-09 10:59,2012-12-09 10:59,,2012-08-22 14:00,2012-08-22 14:00,2012-08-22 14:00,2012-08-22 14:00,2012-08-22 14:00,2012-08-22 14:00,2012-12-09 10:59,2012-12-09 10:59,,PT_Normal,,,,,u7D0ZJtFHUGTyZgTdzXEUw,,,,N,0,0,,,2013-11-05 11:09,2013-11-05 11:09,admin,admin,
841,102558,4512,26289,6590,0,N,N,N,CP_Drtn,TT_FinMile,DT_FixedDrtn,TK_NotStart,5.5,"Material Requisition approval for Steel plates, Cathodic Protection, field instruments etc.",,560,0,0,0,0,0,0,0,0,0,,,,2012-09-29 08:00,2012-09-29 08:00,,2012-07-27 10:30,2012-07-27 10:30,2012-07-27 10:30,2012-07-27 10:30,2012-07-27 10:30,2012-07-27 10:30,2012-09-29 08:00,2012-09-29 08:00,,PT_Normal,,,,,gRggkMyRckaiew7ZDiMDiw,,,,N,0,0,,,2013-11-05 11:09,2013-11-05 11:09,admin,admin,
842,102559,4512,26290,6590,0,N,N,N,CP_Drtn,TT_FinMile,DT_FixedDrtn,TK_NotStart,5.11,Complete Installation of Cathodic Protection,,0,0,0,0,0,0,0,0,0,0,,,,2013-07-09 17:00,2013-07-09 17:00,,2013-07-09 17:00,2013-07-09 17:00,2013-07-09 17:00,2013-07-09 17:00,2013-07-09 17:00,2013-07-09 17:00,2013-07-09 17:00,2013-07-09 17:00,,PT_Normal,,,,,VSA3mVk2+Ee9Yl9EYgCh1w,,,,Y,0,0,,,2013-11-05 11:09,2013-11-05 11:09,admin,admin,
843,102560,4512,26291,6590,0,N,N,N,CP_Drtn,TT_FinMile,DT_FixedDrtn,TK_NotStart,5.12,Complete Installation for instruments,,0,0,0,0,0,0,0,0,0,0,,,,2013-08-04 17:00,2013-08-04 17:00,,2013-08-04 17:00,2013-08-04 17:00,2013-08-04 17:00,2013-08-04 17:00,2013-08-04 17:00,2013-08-04 17:00,2013-08-04 17:00,2013-08-04 17:00,,PT_Normal,,,,,kWOKtRoy5kaABEeLEX5K9A,,,,Y,0,0,,,2013-11-05 11:09,2013-11-05 11:09,admin,admin,
844,102561,4512,26292,6590,0,N,N,N,CP_Drtn,TT_FinMile,DT_FixedDrtn,TK_NotStart,5.8,Supply of materials to site,,512,512,0,0,0,0,0,0,0,0,,,,2012-11-20 10:00,2012-11-20 10:00,,2012-09-24 13:00,2012-09-24 13:00,2012-09-24 13:00,2012-09-24 13:00,2012-09-24 13:00,2012-09-24 13:00,2012-11-20 10:00,2012-11-20 10:00,,PT_Normal,,,,,O2F4sZU2Rkm4ps4mxUOgUQ,,,,N,0,0,,,2013-11-05 11:09,2013-11-05 11:09,admin,admin,
845,127643,6764,35200,6640,0,N,N,N,CP_Drtn,TT_Task,DT_FixedDrtn,TK_NotStart,HHI.1502,Perform Final Inspection & Handover to CLient,,220,220,10,0,0,0,10,0,0,0,,,,2015-02-04 16:00,2015-02-05 16:00,,2015-01-10 16:00,2015-01-11 16:00,2015-01-10 16:00,2015-01-11 16:00,2015-01-10 16:00,2015-01-11 16:00,2015-02-04 16:00,2015-02-05 16:00,,PT_Normal,,,,,ZV/jVlIhTdakyW/8TOuSpw,,,,N,0,0,,,2014-02-17 15:27,2014-03-01 17:08,admin,admin,
846,127644,6764,35201,6640,0,N,N,N,CP_Drtn,TT_Task,DT_FixedDrtn,TK_NotStart,HHI.1503,Perform Final Inspection & Handover to CLient,,0,0,10,0,0,0,10,0,0,0,,,,2015-02-04 16:00,2015-02-05 16:00,,2015-02-04 16:00,2015-02-05 16:00,2015-02-04 16:00,2015-02-05 16:00,2015-02-04 16:00,2015-02-05 16:00,2015-02-04 16:00,2015-02-05 16:00,,PT_Normal,,,,,MBGKlQ9kRpG1Sd5ULwE8JA,,,,Y,0,0,,,2014-02-17 15:27,2014-03-01 17:08,admin,admin,
847,127645,6764,35202,6640,0,N,N,N,CP_Drtn,TT_Mile,DT_FixedDrtn,TK_NotStart,HHI.1263,HHI Hand over Tank#1(10GDK51BB001) Foundation  to AZ,,0,0,0,0,0,0,0,0,0,0,2014-01-30 07:00,,,2014-01-30 07:00,2014-01-30 07:00,,2014-01-30 07:00,2014-01-30 07:00,2014-01-30 07:00,2014-01-30 07:00,2014-01-30 07:00,2014-01-30 07:00,2014-01-30 07:00,2014-01-30 07:00,CS_MSO,PT_Normal,,,,,p0VivTFNQ9ymByGLGuCHBA,mZLpwe/EQNeoWPSCAEM8Mw,,,N,0,0,,,2014-02-17 15:27,2014-03-01 14:49,admin,admin,
848,127646,6764,35202,6640,0,N,N,N,CP_Drtn,TT_Task,DT_FixedDrtn,TK_NotStart,HHI.1264,AZ Check Tank#1 Foundation Levelness prior to Mechanical Works,,480,0,10,0,0,0,10,0,0,0,,,,2014-03-27 07:00,2014-03-27 17:00,,2014-01-30 07:00,2014-01-30 17:00,2014-01-30 07:00,2014-01-30 17:00,2014-01-30 07:00,2014-01-30 17:00,2014-03-27 07:00,2014-03-27 17:00,,PT_Normal,,,,,0y4Wa9NOQmin5d0Q9PnZZw,,,,N,0,0,,,2014-02-17 15:27,2014-03-01 17:06,admin,admin,
849,127647,6764,35202,6640,0,N,N,N,CP_Drtn,TT_Mile,DT_FixedDrtn,TK_NotStart,HHI.1265,HHI Hand over Tank#2(10GDK52BB001) Foundation to AZ,,450,0,0,0,0,0,0,0,0,0,,,,2014-04-03 07:00,2014-04-03 07:00,,2014-02-10 07:00,2014-02-10 07:00,2014-02-10 07:00,2014-02-10 07:00,2014-02-10 07:00,2014-02-10 07:00,2014-04-03 07:00,2014-04-03 07:00,,PT_Normal,,,,,ObWHK79dSPWw1Os0EFy5jw,jZBqjg4eR2uWUdRphzKneQ,,,N,0,0,,,2014-02-17 15:27,2014-03-01 17:06,admin,admin,
850,127648,6764,35202,6640,0,N,N,N,CP_Drtn,TT_Task,DT_FixedDrtn,TK_NotStart,HHI.1266,AZ Check Tank#2 Foundation Levelness prior to Mechanical Works,,450,0,10,0,0,0,10,0,0,0,,,,2014-04-03 07:00,2014-04-03 17:00,,2014-02-10 07:00,2014-02-10 17:00,2014-02-10 07:00,2014-02-10 17:00,2014-02-10 07:00,2014-02-10 17:00,2014-04-03 07:00,2014-04-03 17:00,,PT_Normal,,,,,zxZR7YQiRNySUwDRzVWEmw,0G+Ov/CT2EyBqY3FlGkIDA,,,N,0,0,,,2014-02-17 15:27,2014-03-01 17:06,admin,admin,
851,127649,6764,35205,6640,0,N,N,N,CP_Drtn,TT_Task,DT_FixedDrtn,TK_NotStart,HHI.1362,Erect & Tack Shell Course # 5 & Install Stagging Brackets,,450,0,20,0,380,380,20,48,0,48,,,,2014-06-14 07:00,2014-06-15 17:00,,2014-04-22 07:00,2014-04-23 17:00,2014-04-22 07:00,2014-04-23 17:00,2014-04-22 07:00,2014-04-23 17:00,2014-06-14 07:00,2014-06-15 17:00,,PT_Normal,,,,,M40TaquISGWlw3hozEErpw,ecDUDG8kRm2JZAKMZ9pG6w,,,N,0,0,,,2014-02-17 15:27,2014-03-01 17:06,admin,admin,
852,127650,6764,35205,6640,0,N,N,N,CP_Drtn,TT_Task,DT_FixedDrtn,TK_NotStart,HHI.1363,Weld Outer Vertical Seam /Install the Stairways support on Shell,,450,0,10,0,167.111111,167.111111,10,33.066667,0,33.066667,,,,2014-06-15 07:00,2014-06-15 17:00,,2014-04-23 07:00,2014-04-23 17:00,2014-04-23 07:00,2014-04-23 17:00,2014-04-23 07:00,2014-04-23 17:00,2014-06-15 07:00,2014-06-15 17:00,,PT_Normal,,,,,tTe1rWRsSTqGLlCeg3xv4Q,yYu4cW08SCmEyuZcw/ZGvA,,,N,0,0,,,2014-02-17 15:27,2014-03-01 17:06,admin,admin,
853,127651,6764,35205,6640,0,N,N,N,CP_Drtn,TT_Task,DT_FixedDrtn,TK_NotStart,HHI.1364,Backgouge & NDT Inside Vertical Seam,,450,0,10,0,90.666666,90.666666,10,42.666666,0,42.666666,,,,2014-06-15 07:00,2014-06-15 17:00,,2014-04-23 07:00,2014-04-23 17:00,2014-04-23 07:00,2014-04-23 17:00,2014-04-23 07:00,2014-04-23 17:00,2014-06-15 07:00,2014-06-15 17:00,,PT_Normal,,,,,nH+csJYARj+tZei1BRpjNw,YFBBscqRSPOQ4LJHsNkQ9w,,,N,0,0,,,2014-02-17 15:27,2014-03-01 17:06,admin,admin,
854,127652,6764,35205,6640,0,N,N,N,CP_Drtn,TT_Task,DT_FixedDrtn,TK_NotStart,HHI.1366,"""""Weld Outer Horizontal Seam between Shell Course # 4 & 5""""",,450,0,20,0,320,320,20,85.333334,0,85.333334,,,,2014-06-17 07:00,2014-06-18 17:00,,2014-04-26 07:00,2014-04-27 17:00,2014-04-26 07:00,2014-04-27 17:00,2014-04-26 07:00,2014-04-27 17:00,2014-06-17 07:00,2014-06-18 17:00,,PT_Normal,,,,,5KF7E0CuSsSEeEm3c/T/Mw,fEGyf71ySF2jf/P9NvOMtA,,,N,0,0,,,2014-02-17 15:27,2014-03-01 17:06,admin,admin,
855,127653,6764,35205,6640,0,N,N,N,CP_Drtn,TT_Task,DT_FixedDrtn,TK_NotStart,HHI.1367,"""""Backgouge & NDT Inside Horizontal Seam between Shell Course# 4 & 5""""",,450,0,10,0,80,80,10,33.066667,0,33.066667,,,,2014-06-19 07:00,2014-06-19 17:00,,2014-04-28 07:00,2014-04-28 17:00,2014-04-28 07:00,2014-04-28 17:00,2014-04-28 07:00,2014-04-28 17:00,2014-06-19 07:00,2014-06-19 17:00,,PT_Normal,,,,,6fXg70IfQSSjKCJuQ3w4Lg,8AhkpB7IS1iyLoc9QJjQag,,,N,0,0,,,2014-02-17 15:27,2014-03-01 17:06,admin,admin,
856,127654,6764,35205,6640,0,N,N,N,CP_Drtn,TT_Task,DT_FixedDrtn,TK_NotStart,HHI.1368,"Weld Inner Horizontal Seam between Shell Course # 4 & 5""""",,450,0,10,0,405.333336,405.333336,10,85.333333,0,85.333333,,,,2014-06-21 07:00,2014-06-21 17:00,,2014-04-29 07:00,2014-04-29 17:00,2014-04-29 07:00,2014-04-29 17:00,2014-04-29 07:00,2014-04-29 17:00,2014-06-21 07:00,2014-06-21 17:00,,PT_Normal,,,,,FYEJfR/fSOqNyJbqrM5uJg,g/pA6eEKR4qRgkfP7LFxrA,,,N,0,0,,,2014-02-17 15:27,2014-03-01 17:06,admin,admin,
857,127655,6764,35205,6640,0,N,N,N,CP_Drtn,TT_Task,DT_FixedDrtn,TK_NotStart,HHI.1369,Quailty Check(Visual Inspection),,450,0,70,0,27.111111,27.111111,70,33.066667,0,33.066667,,,,2014-06-14 07:00,2014-06-21 17:00,,2014-04-22 07:00,2014-04-29 17:00,2014-04-22 07:00,2014-04-29 17:00,2014-04-22 07:00,2014-04-29 17:00,2014-06-14 07:00,2014-06-21 17:00,,PT_Normal,,,,,GPiiNFtCRxyZYoh8l22m7w,ESR2Ruq8Sq+kiwB5xqCmrA,,,N,0,0,,,2014-02-17 15:27,2014-03-01 17:06,admin,admin,
858,127656,6764,35205,6640,0,N,N,N,CP_Drtn,TT_Task,DT_FixedDrtn,TK_NotStart,HHI.1365,Weld Inside Vertical Seam,,450,0,10,0,160,160,10,33.066667,0,33.066667,,,,2014-06-16 07:00,2014-06-16 17:00,,2014-04-24 07:00,2014-04-24 17:00,2014-04-24 07:00,2014-04-24 17:00,2014-04-24 07:00,2014-04-24 17:00,2014-06-16 07:00,2014-06-16 17:00,,PT_Normal,,,,,yEF+djD3Thy/BC6p+szSWA,SQxH3Jg2SrCb+RjqVA+lkg,,,N,0,0,,,2014-02-17 15:27,2014-03-01 17:06,admin,admin,
859,127657,6764,35206,6640,0,N,N,N,CP_Drtn,TT_Task,DT_FixedDrtn,TK_NotStart,HHI.1378,Perform RT for Tank#1 & #2,,460,10,10,0,0,0,10,0,0,0,,,,2014-06-25 07:00,2014-06-25 17:00,,2014-05-03 07:00,2014-05-03 17:00,2014-05-03 07:00,2014-05-03 17:00,2014-05-03 07:00,2014-05-03 17:00,2014-06-25 07:00,2014-06-25 17:00,,PT_Normal,,,,,0Ioadf3NSXivh89sXnYGSw,/6cai9VLTE2sY94MF15f8w,,,N,0,0,,,2014-02-17 15:27,2014-03-01 17:06,admin,admin,
860,127658,6764,35207,6640,0,N,N,N,CP_Drtn,TT_Task,DT_FixedDrtn,TK_NotStart,HHI.1370,Erect & Tack Shell Course # 5 & Install Stagging Brackets,,460,0,20,0,440,440,20,48,0,48,,,,2014-06-17 07:00,2014-06-18 17:00,,2014-04-24 07:00,2014-04-26 17:00,2014-04-24 07:00,2014-04-26 17:00,2014-04-24 07:00,2014-04-26 17:00,2014-06-17 07:00,2014-06-18 17:00,,PT_Normal,,,,,0m61HSQ5S2qhW6eOhylmOg,64UoKPZrS12VGLedBpq9sw,,,N,0,0,,,2014-02-17 15:27,2014-03-01 17:06,admin,admin,
861,127659,6764,35207,6640,0,N,N,N,CP_Drtn,TT_Task,DT_FixedDrtn,TK_NotStart,HHI.1371,Weld Outer Vertical Seam,,460,0,10,0,160,160,10,33.066667,0,33.066667,,,,2014-06-18 07:00,2014-06-18 17:00,,2014-04-26 07:00,2014-04-26 17:00,2014-04-26 07:00,2014-04-26 17:00,2014-04-26 07:00,2014-04-26 17:00,2014-06-18 07:00,2014-06-18 17:00,,PT_Normal,,,,,w3JyrzJeRmqAYOr91IxN2Q,H6CD4g14ShSoOcQ0QjN+OQ,,,N,0,0,,,2014-02-17 15:27,2014-03-01 17:06,admin,admin,
862,127660,6764,35207,6640,0,N,N,N,CP_Drtn,TT_Task,DT_FixedDrtn,TK_NotStart,HHI.1372,Backgouge & NDT Inside Vertical Seam,,460,0,10,0,80,80,10,42.666666,0,42.666666,,,,2014-06-18 07:00,2014-06-18 17:00,,2014-04-26 07:00,2014-04-26 17:00,2014-04-26 07:00,2014-04-26 17:00,2014-04-26 07:00,2014-04-26 17:00,2014-06-18 07:00,2014-06-18 17:00,,PT_Normal,,,,,7/W93dF7SuqXMuWh85wjLA,H0TiJRkQQeywy8GWoKp5Lw,,,N,0,0,,,2014-02-17 15:27,2014-03-01 17:06,admin,admin,
863,127661,6764,35207,6640,0,N,N,N,CP_Drtn,TT_Task,DT_FixedDrtn,TK_NotStart,HHI.1373,Weld Inside Vertical Seam,,460,0,10,0,167.111111,167.111111,10,33.066667,0,33.066667,,,,2014-06-19 07:00,2014-06-19 17:00,,2014-04-27 07:00,2014-04-27 17:00,2014-04-27 07:00,2014-04-27 17:00,2014-04-27 07:00,2014-04-27 17:00,2014-06-19 07:00,2014-06-19 17:00,,PT_Normal,,,,,NhsDpGZ4QV6DoEMEOh+ubg,V+1EL0L8QtyVl2Bkud8JfA,,,N,0,0,,,2014-02-17 15:27,2014-03-01 17:06,admin,admin,
864,127662,6764,35207,6640,0,N,N,N,CP_Drtn,TT_Task,DT_FixedDrtn,TK_NotStart,HHI.1375,"""""Backgouge & NDT Inside Horizontal Seam between Shell Course# 4 & 5""""",,460,0,10,0,108.444444,108.444444,10,33.066667,0,33.066667,,,,2014-06-23 07:00,2014-06-23 17:00,,2014-04-30 07:00,2014-04-30 17:00,2014-04-30 07:00,2014-04-30 17:00,2014-04-30 07:00,2014-04-30 17:00,2014-06-23 07:00,2014-06-23 17:00,,PT_Normal,,,,,VytPsBKPT6iGbNLTVH5XUA,anI+F95eQHKxg5XvPKYMyA,,,N,0,0,,,2014-02-17 15:27,2014-03-01 17:06,admin,admin,
865,127663,6764,35207,6640,0,N,N,N,CP_Drtn,TT_Task,DT_FixedDrtn,TK_NotStart,HHI.1376,"Weld Inner Horizontal Seam between Shell Course #4 & 5""""",,460,0,10,0,405.333336,405.333336,10,85.333333,0,85.333333,,,,2014-06-24 07:00,2014-06-24 17:00,,2014-05-01 07:00,2014-05-01 17:00,2014-05-01 07:00,2014-05-01 17:00,2014-05-01 07:00,2014-05-01 17:00,2014-06-24 07:00,2014-06-24 17:00,,PT_Normal,,,,,F+Y/u5U8TzmDa9pOALv5ww,8kTZEi6uQw+yjcdvBeBSdg,,,N,0,0,,,2014-02-17 15:27,2014-03-01 17:06,admin,admin,
866,127664,6764,35207,6640,0,N,N,N,CP_Drtn,TT_Task,DT_FixedDrtn,TK_NotStart,HHI.1377,Quailty Check(Visual Inspection),,460,0,60,0,55.555555,55.555555,60,33.066667,0,33.066667,,,,2014-06-18 07:00,2014-06-24 17:00,,2014-04-26 07:00,2014-05-01 17:00,2014-04-26 07:00,2014-05-01 17:00,2014-04-26 07:00,2014-05-01 17:00,2014-06-18 07:00,2014-06-24 17:00,,PT_Normal,,,,,bziQTvmMRYiB4KYhMsKwXg,jwSRPut+S6+roZdJ8tHZYw,,,N,0,0,,,2014-02-17 15:27,2014-03-01 17:06,admin,admin,
867,127665,6764,35207,6640,0,N,N,N,CP_Drtn,TT_Task,DT_FixedDrtn,TK_NotStart,HHI.1374,"""""Weld Outer Horizontal Seam between Shell Course # 4 & 5""""",,460,0,20,0,341.333334,341.333334,20,85.333334,0,85.333334,,,,2014-06-21 07:00,2014-06-22 17:00,,2014-04-28 07:00,2014-04-29 17:00,2014-04-28 07:00,2014-04-29 17:00,2014-04-28 07:00,2014-04-29 17:00,2014-06-21 07:00,2014-06-22 17:00,,PT_Normal,,,,,mzBC01MZT6qJJa8yr+Vl1w,meKlOlclSNCNkxYikMfnRQ,,,N,0,0,,,2014-02-17 15:27,2014-03-01 17:06,admin,admin,
868,127666,6764,35209,6640,0,N,N,N,CP_Drtn,TT_Task,DT_FixedDrtn,TK_NotStart,HHI.1413,Erect & Tack Shell Course # 7 & Install Stagging Brackets,,450,0,20,0,400,400,20,48,0,48,,,,2014-08-10 11:00,2014-08-12 11:00,,2014-06-05 07:00,2014-06-07 17:00,2014-06-05 07:00,2014-06-07 17:00,2014-06-05 07:00,2014-06-07 17:00,2014-08-10 11:00,2014-08-12 11:00,,PT_Normal,,,,,vmz+RQbmSme6ddPPHa7wGw,of2PSc10QNyU1ZYjeFrnJA,,,N,0,0,,,2014-02-17 15:27,2014-03-01 17:06,admin,admin,
869,127667,6764,35209,6640,0,N,N,N,CP_Drtn,TT_Task,DT_FixedDrtn,TK_NotStart,HHI.1414,Weld Outer Vertical Seam /Install the Stairways support on Shell,,450,0,10,0,160,160,10,42.666666,0,42.666666,,,,2014-08-11 11:00,2014-08-12 11:00,,2014-06-07 07:00,2014-06-07 17:00,2014-06-07 07:00,2014-06-07 17:00,2014-06-07 07:00,2014-06-07 17:00,2014-08-11 11:00,2014-08-12 11:00,,PT_Normal,,,,,rPfKba2XRdORCcjDcOkIyg,ehStpYPjQzuMoSj84qWTqg,,,N,0,0,,,2014-02-17 15:27,2014-03-01 17:06,admin,admin,
870,127668,6764,35209,6640,0,N,N,N,CP_Drtn,TT_Task,DT_FixedDrtn,TK_NotStart,HHI.1415,Backgouge & NDT Inside Vertical Seam,,450,0,10,0,90.666666,90.666666,10,42.666666,0,42.666666,,,,2014-08-11 11:00,2014-08-12 11:00,,2014-06-07 07:00,2014-06-07 17:00,2014-06-07 07:00,2014-06-07 17:00,2014-06-07 07:00,2014-06-07 17:00,2014-08-11 11:00,2014-08-12 11:00,,PT_Normal,,,,,xOStUDsfSQyBush7UQGS0w,mMz7M+EzShWrI24PqPUSsw,,,N,0,0,,,2014-02-17 15:27,2014-03-01 17:06,admin,admin,
871,127669,6764,35209,6640,0,N,N,N,CP_Drtn,TT_Task,DT_FixedDrtn,TK_NotStart,HHI.1416,Weld Inside Vertical Seam,,450,0,10,0,160,160,10,42.666666,0,42.666666,,,,2014-08-12 11:00,2014-08-13 11:00,,2014-06-08 07:00,2014-06-08 17:00,2014-06-08 07:00,2014-06-08 17:00,2014-06-08 07:00,2014-06-08 17:00,2014-08-12 11:00,2014-08-13 11:00,,PT_Normal,,,,,urtFbUz+Qw+r2qMj1CAJfA,CZDTqVohTcmJlKjd8Mtugg,,,N,0,0,,,2014-02-17 15:27,2014-03-01 17:06,admin,admin,
872,127670,6764,35209,6640,0,N,N,N,CP_Drtn,TT_Task,DT_FixedDrtn,TK_NotStart,HHI.1417,"""""Weld Outer Horizontal Seam between Shell Course # 6 & 7""""",,450,0,10,0,160,160,10,33.066667,0,33.066667,,,,2014-08-13 11:00,2014-08-14 11:00,,2014-06-09 07:00,2014-06-09 17:00,2014-06-09 07:00,2014-06-09 17:00,2014-06-09 07:00,2014-06-09 17:00,2014-08-13 11:00,2014-08-14 11:00,,PT_Normal,,,,,7RVN9OtpSMKnYWjgTATszg,+qucGPuaT4i5hl3MXazLlw,,,N,0,0,,,2014-02-17 15:27,2014-03-01 17:06,admin,admin,
873,127671,6764,35209,6640,0,N,N,N,CP_Drtn,TT_Task,DT_FixedDrtn,TK_NotStart,HHI.1418,"""""Backgouge & NDT Inside Horizontal Seam between Shell Course#6 & 7""""",,450,0,10,0,122.666664,122.666664,10,42.666667,0,42.666667,,,,2014-08-14 11:00,2014-08-15 13:30,,2014-06-10 07:00,2014-06-10 17:00,2014-06-10 07:00,2014-06-10 17:00,2014-06-10 07:00,2014-06-10 17:00,2014-08-14 11:00,2014-08-15 13:30,,PT_Normal,,,,,JbyDvTBeQHOT23LTyN8/MA,kv4rOcQMQFewlX30sN9nmA,,,N,0,0,,,2014-02-17 15:27,2014-03-01 17:06,admin,admin,
874,127672,6764,35209,6640,0,N,N,N,CP_Drtn,TT_Task,DT_FixedDrtn,TK_NotStart,HHI.1419,"Weld Inner Horizontal Seam between Shell Course #6 & 7""""",,450,0,10,0,188.444444,188.444444,10,33.066667,0,33.066667,,,,2014-08-15 13:30,2014-08-16 16:00,,2014-06-11 07:00,2014-06-11 17:00,2014-06-11 07:00,2014-06-11 17:00,2014-06-11 07:00,2014-06-11 17:00,2014-08-15 13:30,2014-08-16 16:00,,PT_Normal,,,,,caTU93ebQnOwfg69txtTuQ,GsfyLVimQku405T+Fr3/zw,,,N,0,0,,,2014-02-17 15:27,2014-03-01 17:06,admin,admin,
875,127673,6764,35209,6640,0,N,N,N,CP_Drtn,TT_Task,DT_FixedDrtn,TK_NotStart,HHI.1421,Quailty Check(Visual Inspection & PT for Shell Nozzle & Pad),,450,0,60,0,55.555555,55.555555,60,33.066667,0,33.066667,,,,2014-08-10 11:00,2014-08-16 16:00,,2014-06-05 07:00,2014-06-11 17:00,2014-06-05 07:00,2014-06-11 17:00,2014-06-05 07:00,2014-06-11 17:00,2014-08-10 11:00,2014-08-16 16:00,,PT_Normal,,,,,PGMckB/ESlOLVjCGM/pKMA,/yTmTaYBSzWSD+fag9COZQ,,,N,0,0,,,2014-02-17 15:27,2014-03-01 17:06,admin,admin,
876,127674,6764,35209,6640,0,N,N,N,CP_Drtn,TT_Task,DT_FixedDrtn,TK_NotStart,HHI.1420,"Fit,Weld Nozzle on Shell",,450,0,10,0,0,0,10,0,0,0,,,,2014-08-15 13:30,2014-08-16 16:00,,2014-06-11 07:00,2014-06-11 17:00,2014-06-11 07:00,2014-06-11 17:00,2014-06-11 07:00,2014-06-11 17:00,2014-08-15 13:30,2014-08-16 16:00,,PT_Normal,,,,,TOHKonJ4TlazXDHZmgmCLQ,,,,N,0,0,,,2014-02-17 15:27,2014-03-01 17:06,admin,admin,
877,127675,6764,35210,6640,0,N,N,N,CP_Drtn,TT_Task,DT_FixedDrtn,TK_NotStart,HHI.1422,Perform RT for Tank#1 & #2,,450,0,10,0,0,0,10,0,0,0,,,,2014-08-16 16:00,2014-08-17 16:00,,2014-06-12 07:00,2014-06-12 17:00,2014-06-12 07:00,2014-06-12 17:00,2014-06-12 07:00,2014-06-12 17:00,2014-08-16 16:00,2014-08-17 16:00,,PT_Normal,,,,,b8qZYFlTTBWlF5J7zl1V8A,EqwopKted0GNF+1fvK/AJA,,,N,0,0,,,2014-02-17 15:27,2014-03-01 17:06,admin,admin,
878,127676,6764,35211,6640,0,N,N,N,CP_Drtn,TT_Task,DT_FixedDrtn,TK_NotStart,HHI.1404,Erect & Tack Shell Course # 7 & Install Stagging Brackets,,450,0,20,0,420,420,20,32,0,32,,,,2014-08-03 16:00,2014-08-05 16:00,,2014-05-29 07:00,2014-05-31 17:00,2014-05-29 07:00,2014-05-31 17:00,2014-05-29 07:00,2014-05-31 17:00,2014-08-03 16:00,2014-08-05 16:00,,PT_Normal,,,,,iFKAEfHDQD2Mxk3eOOZmQw,LlFnB+sYTcekC7FnvJWU+Q,,,N,0,0,,,2014-02-17 15:27,2014-03-01 17:06,admin,admin,
879,127677,6764,35211,6640,0,N,N,N,CP_Drtn,TT_Task,DT_FixedDrtn,TK_NotStart,HHI.1405,Weld Outer Vertical Seam /Install the Stairways support on Shell,,450,0,10,0,170.666666,170.666666,10,42.666666,0,42.666666,,,,2014-08-04 16:00,2014-08-05 16:00,,2014-05-31 07:00,2014-05-31 17:00,2014-05-31 07:00,2014-05-31 17:00,2014-05-31 07:00,2014-05-31 17:00,2014-08-04 16:00,2014-08-05 16:00,,PT_Normal,,,,,mcxGk817SS6qxmEkmkrFvA,KAL0knLPRJO5hTW3rF0OUw,,,N,0,0,,,2014-02-17 15:27,2014-03-01 17:06,admin,admin,
880,127678,6764,35211,6640,0,N,N,N,CP_Drtn,TT_Task,DT_FixedDrtn,TK_NotStart,HHI.1406,Backgouge & NDT Inside Vertical Seam,,450,0,10,0,90.666666,90.666666,10,42.666666,0,42.666666,,,,2014-08-04 16:00,2014-08-05 16:00,,2014-05-31 07:00,2014-05-31 17:00,2014-05-31 07:00,2014-05-31 17:00,2014-05-31 07:00,2014-05-31 17:00,2014-08-04 16:00,2014-08-05 16:00,,PT_Normal,,,,,NJykRBQNRmiiGwRqh7/OyQ,PBQyarmoSIG4x4uJ6TMoyQ,,,N,0,0,,,2014-02-17 15:27,2014-03-01 17:06,admin,admin,
881,127679,6764,35211,6640,0,N,N,N,CP_Drtn,TT_Task,DT_FixedDrtn,TK_NotStart,HHI.1407,Weld Inside Vertical Seam,,450,0,10,0,170.666666,170.666666,10,42.666666,0,42.666666,,,,2014-08-05 16:00,2014-08-06 16:00,,2014-06-01 07:00,2014-06-01 17:00,2014-06-01 07:00,2014-06-01 17:00,2014-06-01 07:00,2014-06-01 17:00,2014-08-05 16:00,2014-08-06 16:00,,PT_Normal,,,,,NZIZXiTLRY+HRqC0ejY1OQ,LdZvuS7oTxWHFJM0s8kujQ,,,N,0,0,,,2014-02-17 15:27,2014-03-01 17:06,admin,admin,
882,127680,6764,35211,6640,0,N,N,N,CP_Drtn,TT_Task,DT_FixedDrtn,TK_NotStart,HHI.1408,"""""Weld Outer Horizontal Seam between Shell Course # 6 & 7""""",,450,0,10,0,167.111111,167.111111,10,33.066667,0,33.066667,,,,2014-08-06 16:00,2014-08-07 16:00,,2014-06-02 07:00,2014-06-02 17:00,2014-06-02 07:00,2014-06-02 17:00,2014-06-02 07:00,2014-06-02 17:00,2014-08-06 16:00,2014-08-07 16:00,,PT_Normal,,,,,CbL5dPSySFK5PXEQJs8KJQ,oBlQsFKSSDehNLYdujYFiQ,,,N,0,0,,,2014-02-17 15:27,2014-03-01 17:06,admin,admin,
883,127681,6764,35211,6640,0,N,N,N,CP_Drtn,TT_Task,DT_FixedDrtn,TK_NotStart,HHI.1410,"Weld Inner Horizontal Seam between Shell Course # 6 & 7""""",,450,0,10,0,188.444444,188.444444,10,33.066667,0,33.066667,,,,2014-08-09 11:00,2014-08-10 11:00,,2014-06-04 07:00,2014-06-04 17:00,2014-06-04 07:00,2014-06-04 17:00,2014-06-04 07:00,2014-06-04 17:00,2014-08-09 11:00,2014-08-10 11:00,,PT_Normal,,,,,zJpzGO3lTDiF3947xZEGrg,+SZCB1ijS7CySzEhmpcZIg,,,N,0,0,,,2014-02-17 15:27,2014-03-01 17:06,admin,admin,
884,127682,6764,35211,6640,0,N,N,N,CP_Drtn,TT_Task,DT_FixedDrtn,TK_NotStart,HHI.1412,Quailty Check(Visual Inspection & PT& Air Leak Test for Shell Nozzle & Pad),,450,0,60,0,55.555555,55.555555,60,33.066667,0,33.066667,,,,2014-08-03 16:00,2014-08-10 11:00,,2014-05-29 07:00,2014-06-04 17:00,2014-05-29 07:00,2014-06-04 17:00,2014-05-29 07:00,2014-06-04 17:00,2014-08-03 16:00,2014-08-10 11:00,,PT_Normal,,,,,hyWZRmzuSUubBkpi3Yk81g,HEaIPPqZRMWU7FdiujvhHg,,,N,0,0,,,2014-02-17 15:27,2014-03-01 17:06,admin,admin,
885,127683,6764,35211,6640,0,N,N,N,CP_Drtn,TT_Task,DT_FixedDrtn,TK_NotStart,HHI.1409,"""""Backgouge & NDT Inside Horizontal Seam between Shell Course# 6 & 7""""",,450,0,10,0,111.999998,111.999998,10,42.666667,0,42.666667,,,,2014-08-07 16:00,2014-08-09 11:00,,2014-06-03 07:00,2014-06-03 17:00,2014-06-03 07:00,2014-06-03 17:00,2014-06-03 07:00,2014-06-03 17:00,2014-08-07 16:00,2014-08-09 11:00,,PT_Normal,,,,,RnlUhO+gTWK6fvwZnwEkHA,UKLukVBPTkCGRZbPmdSGsQ,,,N,0,0,,,2014-02-17 15:27,2014-03-01 17:06,admin,admin,
886,127684,6764,35211,6640,0,N,N,N,CP_Drtn,TT_Task,DT_FixedDrtn,TK_NotStart,HHI.1411,"Fit,Weld Nozzle on Shell",,450,0,10,0,0,0,10,0,0,0,,,,2014-08-09 11:00,2014-08-10 11:00,,2014-06-04 07:00,2014-06-04 17:00,2014-06-04 07:00,2014-06-04 17:00,2014-06-04 07:00,2014-06-04 17:00,2014-08-09 11:00,2014-08-10 11:00,,PT_Normal,,,,,ENNVh5/mTS+xFTZHH3qNmA,,,,N,0,0,,,2014-02-17 15:27,2014-03-01 17:06,admin,admin,
887,127685,6764,35213,6640,0,N,N,N,CP_Drtn,TT_Task,DT_FixedDrtn,TK_NotStart,HHI.1280,"Quailty Check (Visual Inspection,PT & Vaccum Box Test)",,450,0,20,0,40,40,20,40,0,40,,,,2014-04-03 07:00,2014-04-05 17:00,,2014-02-10 07:00,2014-02-11 17:00,2014-02-10 07:00,2014-02-11 17:00,2014-02-10 07:00,2014-02-11 17:00,2014-04-03 07:00,2014-04-05 17:00,,PT_Normal,,,,,/aPwTLMATOeoU5ts/S8VQw,Cj0h9st1Que0naEhGC31Bg,,,N,0,0,,,2014-02-17 15:27,2014-03-01 17:06,admin,admin,
888,127686,6764,35213,6640,0,N,N,N,CP_Drtn,TT_Task,DT_FixedDrtn,TK_NotStart,HHI.1278,"Install Sealent,Erect & Tack of Annular Plates",,450,0,10,0,80,80,10,8,0,8,,,,2014-04-03 07:00,2014-04-03 17:00,,2014-02-10 07:00,2014-02-10 17:00,2014-02-10 07:00,2014-02-10 17:00,2014-02-10 07:00,2014-02-10 17:00,2014-04-03 07:00,2014-04-03 17:00,,PT_Normal,,,,,C7vp04fgS8OQK2T0/rXUgA,097QdWX0SSCLEWFVz2DdGA,,,N,0,0,,,2014-02-17 15:27,2014-03-01 17:06,admin,admin,
889,127687,6764,35213,6640,0,N,N,N,CP_Drtn,TT_Task,DT_FixedDrtn,TK_NotStart,HHI.1279,Welding of Annular Plates,,450,0,10,0,180,180,10,40,0,40,,,,2014-04-05 07:00,2014-04-05 17:00,,2014-02-11 07:00,2014-02-11 17:00,2014-02-11 07:00,2014-02-11 17:00,2014-02-11 07:00,2014-02-11 17:00,2014-04-05 07:00,2014-04-05 17:00,,PT_Normal,,,,,A4xY0lcwTtWbXP32T1Za5w,oHh7lCJTS+iUEFSmdP+I4Q,,,N,0,0,,,2014-02-17 15:27,2014-03-01 17:06,admin,admin,
890,127688,6764,35214,6640,0,N,N,N,CP_Drtn,TT_Task,DT_FixedDrtn,TK_NotStart,HHI.1283,Fit/Tack Bottom Plates-Short Seams,,450,0,20,0,0,0,20,0,0,0,,,,2014-04-09 07:00,2014-04-10 17:00,,2014-02-16 07:00,2014-02-17 17:00,2014-02-16 07:00,2014-02-17 17:00,2014-02-16 07:00,2014-02-17 17:00,2014-04-09 07:00,2014-04-10 17:00,,PT_Normal,,,,,TfauRp5gSbOxyWsoaWJeHQ,uhkdYaWUx0+umBsFw9lChQ,,,N,0,0,,,2014-02-17 15:27,2014-03-01 17:06,admin,admin,
891,127689,6764,35214,6640,0,N,N,N,CP_Drtn,TT_Task,DT_FixedDrtn,TK_NotStart,HHI.1284,Weld Short Seams,,450,0,30,0,0,0,30,0,0,0,,,,2014-04-10 07:00,2014-04-13 17:00,,2014-02-17 07:00,2014-02-19 17:00,2014-02-17 07:00,2014-02-19 17:00,2014-02-17 07:00,2014-02-19 17:00,2014-04-10 07:00,2014-04-13 17:00,,PT_Normal,,,,,WNxzGGoYT3yQ9YwN+UMKoQ,+WnS43UkRUOt/DhBTcv3Hw,,,N,0,0,,,2014-02-17 15:27,2014-03-01 17:06,admin,admin,
892,127690,6764,35214,6640,0,N,N,N,CP_Drtn,TT_Task,DT_FixedDrtn,TK_NotStart,HHI.1285,Fit/Tack Bottom Plates-Long Seams,,450,0,20,0,0,0,20,0,0,0,,,,2014-04-14 07:00,2014-04-15 17:00,,2014-02-20 07:00,2014-02-22 17:00,2014-02-20 07:00,2014-02-22 17:00,2014-02-20 07:00,2014-02-22 17:00,2014-04-14 07:00,2014-04-15 17:00,,PT_Normal,,,,,6BRsl6jUSvuYmGxPqoOn2w,YK2VI0eP302gnVkOZh9TDA,,,N,0,0,,,2014-02-17 15:27,2014-03-01 17:06,admin,admin,
893,127691,6764,35214,6640,0,N,N,N,CP_Drtn,TT_Task,DT_FixedDrtn,TK_NotStart,HHI.1282,Prepare & Lay Down Bottom Plates,,450,0,20,0,347.999998,347.999998,20,25.6,0,25.6,,,,2014-04-06 07:00,2014-04-07 17:00,,2014-02-12 07:00,2014-02-13 17:00,2014-02-12 07:00,2014-02-13 17:00,2014-02-12 07:00,2014-02-13 17:00,2014-04-06 07:00,2014-04-07 17:00,,PT_Normal,,,,,0z6BZnrzR9qJBnioiFG9cg,cSuqDDb+QJmAnEmAz7DsJA,,,N,0,0,,,2014-02-17 15:27,2014-03-01 17:06,admin,admin,
894,127692,6764,35214,6640,0,N,N,N,CP_Drtn,TT_Task,DT_FixedDrtn,TK_NotStart,HHI.1289,Quailty Check (Visual Inspection& Vaccum Box Test),,450,0,150,0,21.333334,21.333334,150,42.666666,0,42.666666,,,,2014-04-06 07:00,2014-04-22 17:00,,2014-02-12 07:00,2014-03-01 17:00,2014-02-12 07:00,2014-03-01 17:00,2014-02-12 07:00,2014-03-01 17:00,2014-04-06 07:00,2014-04-22 17:00,,PT_Normal,,,,,S0KltSpjRbuaMHiV9aSwkA,XZOJUaRwRAK6ogOg9ogpWA,,,N,0,0,,,2014-02-17 15:27,2014-03-01 17:06,admin,admin,
895,127693,6764,35214,6640,0,N,N,N,CP_Drtn,TT_Task,DT_FixedDrtn,TK_NotStart,HHI.1286,"Erect,Fitup of Sump",,500,50,10,0,51.999998,51.999998,10,42.666666,0,42.666666,,,,2014-04-21 07:00,2014-04-21 17:00,,2014-02-22 07:00,2014-02-22 17:00,2014-02-22 07:00,2014-02-22 17:00,2014-02-22 07:00,2014-02-22 17:00,2014-04-21 07:00,2014-04-21 17:00,,PT_Normal,,,,,U8e9dzCJReKyyCQopLy9aA,azLvu2U/T7yLYVzFoh2CDg,,,N,0,0,,,2014-02-17 15:27,2014-03-01 17:06,admin,admin,
896,127694,6764,35214,6640,0,N,N,N,CP_Drtn,TT_Task,DT_FixedDrtn,TK_NotStart,HHI.1288,Weld Sump,,450,0,10,0,17.066666,17.066666,10,42.666666,0,42.666666,,,,2014-04-22 07:00,2014-04-22 17:00,,2014-03-01 07:00,2014-03-01 17:00,2014-03-01 07:00,2014-03-01 17:00,2014-03-01 07:00,2014-03-01 17:00,2014-04-22 07:00,2014-04-22 17:00,,PT_Normal,,,,,7T3b6H0yTrqHBj5UWxMj9g,SqxN3XVPRMGrmG0HRhHfKQ,,,N,0,0,,,2014-02-17 15:27,2014-03-01 17:06,admin,admin,
897,127695,6764,35214,6640,0,N,N,N,CP_Drtn,TT_Task,DT_FixedDrtn,TK_NotStart,HHI.1287,Weld Long Seams,,450,0,70,0,0,0,70,0,0,0,,,,2014-04-15 07:00,2014-04-22 17:00,,2014-02-22 07:00,2014-03-01 17:00,2014-02-22 07:00,2014-03-01 17:00,2014-02-22 07:00,2014-03-01 17:00,2014-04-15 07:00,2014-04-22 17:00,,PT_Normal,,,,,O2Fnh5GGTg+/c97CeHYrtw,AsgK1LnCDEKHVNCBxqz+EA,,,N,0,0,,,2014-02-17 15:27,2014-03-01 17:06,admin,admin,
898,127696,6764,35215,6640,0,N,N,N,CP_Drtn,TT_Task,DT_FixedDrtn,TK_NotStart,HHI.1281,Perform RT for Tank#1 & #2,,450,0,10,0,0,0,10,0,0,0,,,,2014-04-06 07:00,2014-04-06 17:00,,2014-02-12 07:00,2014-02-12 17:00,2014-02-12 07:00,2014-02-12 17:00,2014-02-12 07:00,2014-02-12 17:00,2014-04-06 07:00,2014-04-06 17:00,,PT_Normal,,,,,gZNID4fgRHatlsUO0bnibg,,,,N,0,0,,,2014-02-17 15:27,2014-03-01 17:06,admin,admin,
899,127697,6764,35217,6640,0,N,N,N,CP_Drtn,TT_Task,DT_FixedDrtn,TK_NotStart,HHI.1441,Erect & Install Stairways & Platforms for Shell,,450,0,20,0,341.333337,341.333337,20,17.066667,0,17.066667,,,,2014-09-06 11:00,2014-09-08 11:00,,2014-07-09 09:00,2014-07-13 11:00,2014-07-09 09:00,2014-07-13 11:00,2014-07-09 09:00,2014-07-13 11:00,2014-09-06 11:00,2014-09-08 11:00,,PT_Normal,,,,,TolVflS5RCutTbp1cUYOJg,3sjD5nnoSZmvKuIzuIduyw,,,N,0,0,,,2014-02-17 15:27,2014-03-01 17:06,admin,admin,
900,127698,6764,35217,6640,0,N,N,N,CP_Drtn,TT_Task,DT_FixedDrtn,TK_NotStart,HHI.1442,Erect & Install Stairways & Platforms & Handrails for Roof,,450,0,20,0,341.333337,341.333337,20,17.066667,0,17.066667,,,,2014-09-08 11:00,2014-09-10 11:00,,2014-07-13 11:00,2014-07-16 13:00,2014-07-13 11:00,2014-07-16 13:00,2014-07-13 11:00,2014-07-16 13:00,2014-09-08 11:00,2014-09-10 11:00,,PT_Normal,,,,,dVl/n5KMSJuc554bj2UsHg,2JyTtz5lRd6WoHA+Zm5UkQ,,,N,0,0,,,2014-02-17 15:27,2014-03-01 17:06,admin,admin,
901,127699,6764,35217,6640,0,N,N,N,CP_Drtn,TT_Task,DT_FixedDrtn,TK_NotStart,HHI.1443,Quality Check,,450,0,10,0,0,0,10,0,0,0,,,,2014-09-08 11:00,2014-09-09 11:00,,2014-07-13 11:00,2014-07-14 15:00,2014-07-13 11:00,2014-07-14 15:00,2014-07-13 11:00,2014-07-14 15:00,2014-09-08 11:00,2014-09-09 11:00,,PT_Normal,,,,,2N5hDjGQQJ63CZzDRCAi7Q,,,,N,0,0,,,2014-02-17 15:27,2014-03-01 17:06,admin,admin,
902,127700,6764,35218,6640,0,N,N,N,CP_Drtn,TT_Task,DT_FixedDrtn,TK_NotStart,HHI.1431,"Erect,Lay Down & Install the Rafters (170 Rafters)/Install Internal Piping Brackets/Piping",,450,0,80,0,1343.999994,1343.999994,80,17.066666,0,17.066666,,,,2014-08-19 16:00,2014-08-28 11:00,,2014-06-16 07:00,2014-06-24 17:00,2014-06-16 07:00,2014-06-24 17:00,2014-06-16 07:00,2014-06-24 17:00,2014-08-19 16:00,2014-08-28 11:00,,PT_Normal,,,,,euRQr+3wTYmwzwDJG+2JtQ,THSHegV9zki4UJbwBanH/w,,,N,0,0,,,2014-02-17 15:27,2014-03-01 17:06,admin,admin,
903,127701,6764,35219,6640,0,N,N,N,CP_Drtn,TT_Task,DT_FixedDrtn,TK_NotStart,HHI.1423,"Fit & Tack 
Shell Course # 7 & Top Curb Angle",,450,0,20,0,255.999999,255.999999,20,8.533333,0,8.533333,,,,2014-08-16 16:00,2014-08-18 16:00,,2014-06-12 07:00,2014-06-14 17:00,2014-06-12 07:00,2014-06-14 17:00,2014-06-12 07:00,2014-06-14 17:00,2014-08-16 16:00,2014-08-18 16:00,,PT_Normal,,,,,Qf9z7DgITVWshWadYo+MEw,WgNR0A6wT0yU49nkkbSCBQ,,,N,0,0,,,2014-02-17 15:27,2014-03-01 17:06,admin,admin,
904,127702,6764,35219,6640,0,N,N,N,CP_Drtn,TT_Task,DT_FixedDrtn,TK_NotStart,HHI.1424,Weld Outer Horizontal Seam between Shell Course # 7 & Top Curb Angle,,460,0,10,0,128,128,10,33.066667,0,33.066667,,,,2014-08-19 16:00,2014-08-20 16:00,,2014-06-15 07:00,2014-06-15 17:00,2014-06-15 07:00,2014-06-15 17:00,2014-06-15 07:00,2014-06-15 17:00,2014-08-19 16:00,2014-08-20 16:00,,PT_Normal,,,,,LAiF9HSyQFm89s1WnUu2sw,Ga3mYA/Hu0GHWc/+xuLfng,,,N,0,0,,,2014-02-17 15:27,2014-03-01 17:06,admin,admin,
905,127703,6764,35219,6640,0,N,N,N,CP_Drtn,TT_Task,DT_FixedDrtn,TK_NotStart,HHI.1425,Backgouge & NDT Inside Horizontal Seam between Shell Course# 7 & Top Curb Angle,,460,10,10,0,90,90,10,33.066667,0,33.066667,,,,2014-08-19 16:00,2014-08-20 16:00,,2014-06-15 07:00,2014-06-15 17:00,2014-06-15 07:00,2014-06-15 17:00,2014-06-15 07:00,2014-06-15 17:00,2014-08-19 16:00,2014-08-20 16:00,,PT_Normal,,,,,GjqEwsj8TsGKuUry04tvmA,XfEkhc3qzUOwu7npi187aw,,,N,0,0,,,2014-02-17 15:27,2014-03-01 17:06,admin,admin,
906,127704,6764,35219,6640,0,N,N,N,CP_Drtn,TT_Task,DT_FixedDrtn,TK_NotStart,HHI.1427,Weld Inner Horizontal Seam between Shell Course # 7 & Top Curb Angle,,450,0,10,0,191.333334,191.333334,10,33.066667,0,33.066667,,,,2014-08-20 16:00,2014-08-21 16:00,,2014-06-17 07:00,2014-06-17 17:00,2014-06-17 07:00,2014-06-17 17:00,2014-06-17 07:00,2014-06-17 17:00,2014-08-20 16:00,2014-08-21 16:00,,PT_Normal,,,,,PG+g9PzpTw+8xLPB06KllA,yaclajItm06nnMuZp+/XWQ,,,N,0,0,,,2014-02-17 15:27,2014-03-01 17:06,admin,admin,
907,127705,6764,35219,6640,0,N,N,N,CP_Drtn,TT_Task,DT_FixedDrtn,TK_NotStart,HHI.1429,Quailty Check (Visual Inspection),,450,0,50,0,42.666664,42.666664,50,42.666667,0,42.666667,,,,2014-08-16 16:00,2014-08-21 16:00,,2014-06-12 07:00,2014-06-17 17:00,2014-06-12 07:00,2014-06-17 17:00,2014-06-12 07:00,2014-06-17 17:00,2014-08-16 16:00,2014-08-21 16:00,,PT_Normal,,,,,MQw4jH28Rn2ZpsI18Q4Oyg,Votkl/0mf0q/Xwp3DlYYRA,,,N,0,0,,,2014-02-17 15:27,2014-03-01 17:06,admin,admin,
908,127706,6764,35219,6640,0,N,N,N,CP_Drtn,TT_Task,DT_FixedDrtn,TK_NotStart,HHI.1426,"Fit up,Tack of Gusset Plates to Shell",,450,0,20,0,341.333337,341.333337,20,17.066667,0,17.066667,,,,2014-08-18 16:00,2014-08-20 16:00,,2014-06-15 07:00,2014-06-16 17:00,2014-06-15 07:00,2014-06-16 17:00,2014-06-15 07:00,2014-06-16 17:00,2014-08-18 16:00,2014-08-20 16:00,,PT_Normal,,,,,4qiCy5uBSP+4fuWDdTcNyw,qKqtJWqv40C4XPuXCBlFdQ,,,N,0,0,,,2014-02-17 15:27,2014-03-01 17:06,admin,admin,
909,127707,6764,35219,6640,0,N,N,N,CP_Drtn,TT_Task,DT_FixedDrtn,TK_NotStart,HHI.1428,Welding of Gusset Plates,,450,0,10,0,202.666668,202.666668,10,85.333333,0,85.333333,,,,2014-08-20 16:00,2014-08-21 16:00,,2014-06-17 07:00,2014-06-17 17:00,2014-06-17 07:00,2014-06-17 17:00,2014-06-17 07:00,2014-06-17 17:00,2014-08-20 16:00,2014-08-21 16:00,,PT_Normal,,,,,oCG34o0xQnuwCw9aOC4KRQ,jKE1tqqZDkGuRH9ov5owxw,,,N,0,0,,,2014-02-17 15:27,2014-03-01 17:06,admin,admin,
910,127708,6764,35220,6640,0,N,N,N,CP_Drtn,TT_Task,DT_FixedDrtn,TK_NotStart,HHI.1432,Prepare/Lay Down Roof Plates (80 Plates),,450,0,60,0,864.000004,864.000004,60,17.066667,0,17.066667,,,,2014-08-23 11:00,2014-08-29 13:30,,2014-06-19 07:00,2014-06-25 17:00,2014-06-19 07:00,2014-06-25 17:00,2014-06-19 07:00,2014-06-25 17:00,2014-08-23 11:00,2014-08-29 13:30,,PT_Normal,,,,,emG6/JeLT2uAmbn1vJHpsw,UwRnchSGxk6LzdhWgLw1qw,,,N,0,0,,,2014-02-17 15:27,2014-03-01 17:06,admin,admin,
911,127709,6764,35220,6640,0,N,N,N,CP_Drtn,TT_Task,DT_FixedDrtn,TK_NotStart,HHI.1433,Tacking of Roof Plates,,450,0,60,0,968,968,60,0,0,0,,,,2014-08-23 11:00,2014-08-29 13:30,,2014-06-19 07:00,2014-06-25 17:00,2014-06-19 07:00,2014-06-25 17:00,2014-06-19 07:00,2014-06-25 17:00,2014-08-23 11:00,2014-08-29 13:30,,PT_Normal,,,,,rh7IAwc3T/i/wGoj8r+7Ew,gQ64PyO/006RhDA9G3ApVA,,,N,0,0,,,2014-02-17 15:27,2014-03-01 17:06,admin,admin,
912,127710,6764,35220,6640,0,N,N,N,CP_Drtn,TT_Task,DT_FixedDrtn,TK_NotStart,HHI.1434,Welding of Roof Plates (Short Seams),,450,0,20,0,544,544,20,128,0,128,,,,2014-08-25 11:00,2014-08-27 11:00,,2014-06-22 07:00,2014-06-23 17:00,2014-06-22 07:00,2014-06-23 17:00,2014-06-22 07:00,2014-06-23 17:00,2014-08-25 11:00,2014-08-27 11:00,,PT_Normal,,,,,u0YPThC5ScWQZ0gSZNJdKw,wctmTeDhj0eZtvG1oplrSg,,,N,0,0,,,2014-02-17 15:27,2014-03-01 17:06,admin,admin,
913,127711,6764,35220,6640,0,N,N,N,CP_Drtn,TT_Task,DT_FixedDrtn,TK_NotStart,HHI.1435,Welding of Roof Plates (Long Seams),,450,0,50,0,1728.000001,1728.000001,50,249.6,0,249.6,,,,2014-08-27 11:00,2014-09-01 16:00,,2014-06-24 07:00,2014-07-01 11:00,2014-06-24 07:00,2014-07-01 11:00,2014-06-24 07:00,2014-07-01 11:00,2014-08-27 11:00,2014-09-01 16:00,,PT_Normal,,,,,ro2Z0ra3RhiN4H/BJE1YpA,JYjrEEAtAkWpQJGOKQ5i1g,,,N,0,0,,,2014-02-17 15:27,2014-03-01 17:06,admin,admin,
914,127712,6764,35220,6640,0,N,N,N,CP_Drtn,TT_Task,DT_FixedDrtn,TK_NotStart,HHI.1436,Tack of Roof Plates to Curb Angle,,460,10,20,0,416,416,20,0,0,0,,,,2014-08-30 16:00,2014-09-01 16:00,,2014-06-26 07:00,2014-06-29 13:00,2014-06-26 07:00,2014-06-29 13:00,2014-06-26 07:00,2014-06-29 13:00,2014-08-30 16:00,2014-09-01 16:00,,PT_Normal,,,,,sNqqGLWdQvey0Y9dG8jo5Q,adc4rGO0akSNOIFtJ1ipew,,,N,0,0,,,2014-02-17 15:27,2014-03-01 17:06,admin,admin,
915,127713,6764,35220,6640,0,N,N,N,CP_Drtn,TT_Task,DT_FixedDrtn,TK_NotStart,HHI.1437,Welding of Roof Plates to Curb Angle,,450,0,20,0,608.000003,608.000003,20,85.333333,0,85.333333,,,,2014-09-01 16:00,2014-09-03 16:00,,2014-07-01 11:00,2014-07-05 13:00,2014-07-01 11:00,2014-07-05 13:00,2014-07-01 11:00,2014-07-05 13:00,2014-09-01 16:00,2014-09-03 16:00,,PT_Normal,,,,,W4xeo1XQSBKd+BICxC4RrQ,LvTc0M252UyaOzpsVtpW2g,,,N,0,0,,,2014-02-17 15:27,2014-03-01 17:06,admin,admin,
916,127714,6764,35220,6640,0,N,N,N,CP_Drtn,TT_Task,DT_FixedDrtn,TK_NotStart,HHI.1440,"Quailty Check (Visual Inspection& Vaccum Box Test,PT,Air Leak Test for Roof Manholes& Nozzles))",,450,0,130,0,27.111111,27.111111,130,33.066667,0,33.066667,,,,2014-08-23 11:00,2014-09-06 11:00,,2014-06-19 07:00,2014-07-08 15:00,2014-06-19 07:00,2014-07-08 15:00,2014-06-19 07:00,2014-07-08 15:00,2014-08-23 11:00,2014-09-06 11:00,,PT_Normal,,,,,fbO+c87lRgCu5nD11zHIMw,YjqvbI3HH0SzAhcX9iT22Q,,,N,0,0,,,2014-02-17 15:27,2014-03-01 17:06,admin,admin,
917,127715,6764,35220,6640,0,N,N,N,CP_Drtn,TT_Task,DT_FixedDrtn,TK_NotStart,HHI.1438,"Fit,Weld Manholes ,Nozzles on Roof /install Top Platform Supports on Roof",,450,0,20,0,0,0,20,0,0,0,,,,2014-09-03 16:00,2014-09-06 11:00,,2014-07-05 13:00,2014-07-08 15:00,2014-07-05 13:00,2014-07-08 15:00,2014-07-05 13:00,2014-07-08 15:00,2014-09-03 16:00,2014-09-06 11:00,,PT_Normal,,,,,oVoDqnVlQZaQJXf6dqzmLw,,,,N,0,0,,,2014-02-17 15:27,2014-03-01 17:06,admin,admin,
918,127716,6764,35220,6640,0,N,N,N,CP_Drtn,TT_Task,DT_FixedDrtn,TK_NotStart,HHI.1439,Weld Internal Piping to Nozzle N1,,450,0,10,0,0,0,10,0,0,0,,,,2014-09-04 16:00,2014-09-06 11:00,,2014-07-07 11:00,2014-07-08 15:00,2014-07-07 11:00,2014-07-08 15:00,2014-07-07 11:00,2014-07-08 15:00,2014-09-04 16:00,2014-09-06 11:00,,PT_Normal,,,,,YMmfKpleSvOOfBa6wSQKqw,,,,N,0,0,,,2014-02-17 15:27,2014-03-01 17:06,admin,admin,
919,127717,6764,35221,6640,0,N,N,N,CP_Drtn,TT_Task,DT_FixedDrtn,TK_NotStart,HHI.1430,"Erect,Laydown & install Girders to Columns (2 Layers ,15 Girders)",,450,0,20,0,341.333331,341.333331,20,17.066666,0,17.066666,,,,2014-08-18 16:00,2014-08-20 16:00,,2014-06-15 07:00,2014-06-16 17:00,2014-06-15 07:00,2014-06-16 17:00,2014-06-15 07:00,2014-06-16 17:00,2014-08-18 16:00,2014-08-20 16:00,,PT_Normal,,,,,HAY+seg7TsmK4ho8yP9SLA,1YJ+hnUN+EGwgZaVQfhHdw,,,N,0,0,,,2014-02-17 15:27,2014-03-01 17:06,admin,admin,
920,127718,6764,35223,6640,0,N,N,N,CP_Drtn,TT_Task,DT_FixedDrtn,TK_NotStart,HHI.1290,Erect & Tack Shell Course # 1 & Install Stagging Brackets,,450,0,20,0,420,420,20,48,0,48,,,,2014-04-23 07:00,2014-04-24 17:00,,2014-03-02 07:00,2014-03-03 17:00,2014-03-02 07:00,2014-03-03 17:00,2014-03-02 07:00,2014-03-03 17:00,2014-04-23 07:00,2014-04-24 17:00,,PT_Normal,,,,,4cP7o/OWSvWEbvFb5l++Ng,dph+kfLeSlKG8yPiEExM8w,,,N,0,0,,,2014-02-17 15:27,2014-03-01 17:06,admin,admin,
921,127719,6764,35223,6640,0,N,N,N,CP_Drtn,TT_Task,DT_FixedDrtn,TK_NotStart,HHI.1291,Weld Outer Vertical Seam / Install the Stairways support on Shell,,450,0,20,0,400,400,20,80,0,80,,,,2014-04-24 07:00,2014-04-26 17:00,,2014-03-03 07:00,2014-03-04 17:00,2014-03-03 07:00,2014-03-04 17:00,2014-03-03 07:00,2014-03-04 17:00,2014-04-24 07:00,2014-04-26 17:00,,PT_Normal,,,,,pg5J7rpvRuC1tmH4lyiSMw,txw9TX5lSqSQoqJyAw76fw,,,N,0,0,,,2014-02-17 15:27,2014-03-01 17:06,admin,admin,
922,127720,6764,35223,6640,0,N,N,N,CP_Drtn,TT_Task,DT_FixedDrtn,TK_NotStart,HHI.1293,"Backgouge,Grinding & NDT Inside Vertical Seam",,450,0,10,0,90,90,10,33.066667,0,33.066667,,,,2014-04-27 07:00,2014-04-27 17:00,,2014-03-05 07:00,2014-03-05 17:00,2014-03-05 07:00,2014-03-05 17:00,2014-03-05 07:00,2014-03-05 17:00,2014-04-27 07:00,2014-04-27 17:00,,PT_Normal,,,,,GRK5/5WZRgyNTmIDlgQWxQ,a0TjU+bsSi2IeVLRsRBs+Q,,,N,0,0,,,2014-02-17 15:27,2014-03-01 17:06,admin,admin,
923,127721,6764,35223,6640,0,N,N,N,CP_Drtn,TT_Task,DT_FixedDrtn,TK_NotStart,HHI.1296,"Quailty Check(Visual Inspection & PT,Air Leak Test for Shell Manholes& Nozzles)",,450,0,60,0,27.111111,27.111111,60,33.066667,0,33.066667,,,,2014-04-23 07:00,2014-04-29 17:00,,2014-03-02 07:00,2014-03-08 17:00,2014-03-02 07:00,2014-03-08 17:00,2014-03-02 07:00,2014-03-08 17:00,2014-04-23 07:00,2014-04-29 17:00,,PT_Normal,,,,,SlZHOVm0QG+fEbd9nPK94Q,xOTmhU+cQjqZJ8uZBDQt5g,,,N,0,0,,,2014-02-17 15:27,2014-03-01 17:06,admin,admin,
924,127722,6764,35223,6640,0,N,N,N,CP_Drtn,TT_Task,DT_FixedDrtn,TK_NotStart,HHI.1294,Weld Inside Vertical Seam,,450,0,10,0,181.333334,181.333334,10,85.333334,0,85.333334,,,,2014-04-28 07:00,2014-04-28 17:00,,2014-03-06 07:00,2014-03-06 17:00,2014-03-06 07:00,2014-03-06 17:00,2014-03-06 07:00,2014-03-06 17:00,2014-04-28 07:00,2014-04-28 17:00,,PT_Normal,,,,,tnhQwWmiTau+jkMWKUmGAA,RUAUI4iwTEid1eFvM96f4A,,,N,0,0,,,2014-02-17 15:27,2014-03-01 17:06,admin,admin,
925,127723,6764,35223,6640,0,N,N,N,CP_Drtn,TT_Task,DT_FixedDrtn,TK_NotStart,HHI.1292,Fit up/Tack Shell #1 to Annular Plate,,450,0,10,0,0,0,10,0,0,0,,,,2014-04-24 07:00,2014-04-24 17:00,,2014-03-03 07:00,2014-03-03 17:00,2014-03-03 07:00,2014-03-03 17:00,2014-03-03 07:00,2014-03-03 17:00,2014-04-24 07:00,2014-04-24 17:00,,PT_Normal,,,,,g/Dvo2lqRXuI8ytkXs5xTg,,,,N,0,0,,,2014-02-17 15:27,2014-03-01 17:06,admin,admin,
926,127724,6764,35223,6640,0,N,N,N,CP_Drtn,TT_Task,DT_FixedDrtn,TK_NotStart,HHI.1295,"Fit,Weld for Manhole ,Nozzles on Shell",,450,0,20,0,0,0,20,0,0,0,,,,2014-04-28 07:00,2014-04-29 17:00,,2014-03-06 07:00,2014-03-08 17:00,2014-03-06 07:00,2014-03-08 17:00,2014-03-06 07:00,2014-03-08 17:00,2014-04-28 07:00,2014-04-29 17:00,,PT_Normal,,,,,t9stgGBaRh+aWPuNcJpA8g,,,,N,0,0,,,2014-02-17 15:27,2014-03-01 17:06,admin,admin,
927,127725,6764,35224,6640,0,N,N,N,CP_Drtn,TT_Task,DT_FixedDrtn,TK_NotStart,HHI.1297,Erect & Tack Shell Course # 1 &Install Stagging Brackets,,450,0,20,0,420,420,20,48,0,48,,,,2014-04-26 07:00,2014-04-27 17:00,,2014-03-04 07:00,2014-03-05 17:00,2014-03-04 07:00,2014-03-05 17:00,2014-03-04 07:00,2014-03-05 17:00,2014-04-26 07:00,2014-04-27 17:00,,PT_Normal,,,,,BMxT6TtpR0KkqJysQukoUQ,kHftJSfCTaiuW6yYVj5xIw,,,N,0,0,,,2014-02-17 15:27,2014-03-01 17:06,admin,admin,
928,127726,6764,35224,6640,0,N,N,N,CP_Drtn,TT_Task,DT_FixedDrtn,TK_NotStart,HHI.1298,Weld Outer Vertical Seam /Install the Stairways support on Shell,,450,0,20,0,290.133334,290.133334,20,85.333334,0,85.333334,,,,2014-04-27 07:00,2014-04-28 17:00,,2014-03-05 07:00,2014-03-06 17:00,2014-03-05 07:00,2014-03-06 17:00,2014-03-05 07:00,2014-03-06 17:00,2014-04-27 07:00,2014-04-28 17:00,,PT_Normal,,,,,2ZmOrjIAS8+ej5cx5IxfNw,XlhY8qmoS9CrJk+4AOejog,,,N,0,0,,,2014-02-17 15:27,2014-03-01 17:06,admin,admin,
929,127727,6764,35224,6640,0,N,N,N,CP_Drtn,TT_Task,DT_FixedDrtn,TK_NotStart,HHI.1300,"Backgouge,Grinding & NDT Inside Vertical Seam",,450,0,10,0,87.111111,87.111111,10,33.066667,0,33.066667,,,,2014-04-29 07:00,2014-04-29 17:00,,2014-03-08 07:00,2014-03-08 17:00,2014-03-08 07:00,2014-03-08 17:00,2014-03-08 07:00,2014-03-08 17:00,2014-04-29 07:00,2014-04-29 17:00,,PT_Normal,,,,,lZZbvbebRfSYd6UaF2FchA,izD41yRKTGS+/uADpTQffg,,,N,0,0,,,2014-02-17 15:27,2014-03-01 17:06,admin,admin,
930,127728,6764,35224,6640,0,N,N,N,CP_Drtn,TT_Task,DT_FixedDrtn,TK_NotStart,HHI.1301,Weld Inside Vertical Seam,,450,0,10,0,192.000001,192.000001,10,85.333334,0,85.333334,,,,2014-04-30 07:00,2014-04-30 17:00,,2014-03-09 07:00,2014-03-09 17:00,2014-03-09 07:00,2014-03-09 17:00,2014-03-09 07:00,2014-03-09 17:00,2014-04-30 07:00,2014-04-30 17:00,,PT_Normal,,,,,m+8LckRiSbK/IekazcmLDA,7ZVeY/g7S7u21f2yq9kicg,,,N,0,0,,,2014-02-17 15:27,2014-03-01 17:06,admin,admin,
931,127729,6764,35224,6640,0,N,N,N,CP_Drtn,TT_Task,DT_FixedDrtn,TK_NotStart,HHI.1303,"Quailty Check(Visual Inspection  PT,Air Leak Test for Shell Manholes& Nozzles)",,450,0,60,0,21.333333,21.333333,60,33.066667,0,33.066667,,,,2014-04-26 07:00,2014-05-01 17:00,,2014-03-04 07:00,2014-03-10 17:00,2014-03-04 07:00,2014-03-10 17:00,2014-03-04 07:00,2014-03-10 17:00,2014-04-26 07:00,2014-05-01 17:00,,PT_Normal,,,,,ipJffn/ZS3CikEL0OENNZw,Hlf1ioSmRpiJnyLtlqpeFg,,,N,0,0,,,2014-02-17 15:27,2014-03-01 17:06,admin,admin,
932,127730,6764,35224,6640,0,N,N,N,CP_Drtn,TT_Task,DT_FixedDrtn,TK_NotStart,HHI.1299,Fit up/Tack Shell #1 to Annular Plate,,450,0,10,0,0,0,10,0,0,0,,,,2014-04-27 07:00,2014-04-27 17:00,,2014-03-05 07:00,2014-03-05 17:00,2014-03-05 07:00,2014-03-05 17:00,2014-03-05 07:00,2014-03-05 17:00,2014-04-27 07:00,2014-04-27 17:00,,PT_Normal,,,,,bgauRCT8TYSA9xIxWeQi5g,,,,N,0,0,,,2014-02-17 15:27,2014-03-01 17:06,admin,admin,
933,127731,6764,35224,6640,0,N,N,N,CP_Drtn,TT_Task,DT_FixedDrtn,TK_NotStart,HHI.1302,"Fit,Weld for Manhole ,Nozzles on Shell",,450,0,20,0,0,0,20,0,0,0,,,,2014-04-30 07:00,2014-05-01 17:00,,2014-03-09 07:00,2014-03-10 17:00,2014-03-09 07:00,2014-03-10 17:00,2014-03-09 07:00,2014-03-10 17:00,2014-04-30 07:00,2014-05-01 17:00,,PT_Normal,,,,,jEKxvK1MRcW3MWs6JpKudQ,,,,N,0,0,,,2014-02-17 15:27,2014-03-01 17:06,admin,admin,
934,127732,6764,35225,6640,0,N,N,N,CP_Drtn,TT_Task,DT_FixedDrtn,TK_NotStart,HHI.1304,Perform RT for Tank#1 & #2,,450,0,10,0,0,0,10,0,0,0,,,,2014-05-03 07:00,2014-05-03 17:00,,2014-03-11 07:00,2014-03-11 17:00,2014-03-11 07:00,2014-03-11 17:00,2014-03-11 07:00,2014-03-11 17:00,2014-05-03 07:00,2014-05-03 17:00,,PT_Normal,,,,,kbT/6VIJS76IPsqXry51cA,,,,N,0,0,,,2014-02-17 15:27,2014-03-01 17:06,admin,admin,
935,127733,6764,35227,6640,0,N,N,N,CP_Drtn,TT_Task,DT_FixedDrtn,TK_NotStart,HHI.1353,Erect & Tack Shell Course # 4 & Install Stagging Brackets,,450,0,20,0,560,560,20,48,0,48,,,,2014-06-05 07:00,2014-06-07 17:00,,2014-04-14 07:00,2014-04-15 17:00,2014-04-14 07:00,2014-04-15 17:00,2014-04-14 07:00,2014-04-15 17:00,2014-06-05 07:00,2014-06-07 17:00,,PT_Normal,,,,,tf4L980AQSGO47dyLCHRMQ,MeOlOFPYSeiURgd4lRWNnw,,,N,0,0,,,2014-02-17 15:27,2014-03-01 17:06,admin,admin,
936,127734,6764,35227,6640,0,N,N,N,CP_Drtn,TT_Task,DT_FixedDrtn,TK_NotStart,HHI.1354,Weld Outer Vertical Seam /Install the Stairways support on Shell,,450,0,10,0,192.000001,192.000001,10,85.333334,0,85.333334,,,,2014-06-07 07:00,2014-06-07 17:00,,2014-04-15 07:00,2014-04-15 17:00,2014-04-15 07:00,2014-04-15 17:00,2014-04-15 07:00,2014-04-15 17:00,2014-06-07 07:00,2014-06-07 17:00,,PT_Normal,,,,,Jtt7g8pYSBmQZHEEg/88/w,jwfE+Mt3TRakFKU0Wam9kA,,,N,0,0,,,2014-02-17 15:27,2014-03-01 17:06,admin,admin,
937,127735,6764,35227,6640,0,N,N,N,CP_Drtn,TT_Task,DT_FixedDrtn,TK_NotStart,HHI.1355,Backgouge & NDT Inside Vertical Seam,,450,0,10,0,101.333333,101.333333,10,33.066667,0,33.066667,,,,2014-06-07 07:00,2014-06-07 17:00,,2014-04-15 07:00,2014-04-15 17:00,2014-04-15 07:00,2014-04-15 17:00,2014-04-15 07:00,2014-04-15 17:00,2014-06-07 07:00,2014-06-07 17:00,,PT_Normal,,,,,JUbpLeNTRa64A+MKzCv2ow,NylUyWoiR6+E15BkZlC+Bw,,,N,0,0,,,2014-02-17 15:27,2014-03-01 17:06,admin,admin,
938,127736,6764,35227,6640,0,N,N,N,CP_Drtn,TT_Task,DT_FixedDrtn,TK_NotStart,HHI.1356,Weld Inside Vertical Seam,,450,0,10,0,202.666668,202.666668,10,85.333333,0,85.333333,,,,2014-06-08 07:00,2014-06-08 17:00,,2014-04-16 07:00,2014-04-16 17:00,2014-04-16 07:00,2014-04-16 17:00,2014-04-16 07:00,2014-04-16 17:00,2014-06-08 07:00,2014-06-08 17:00,,PT_Normal,,,,,hiSgeKbzSLmCRobDZz3BNw,6+881kh5TgerxDrad2RzQg,,,N,0,0,,,2014-02-17 15:27,2014-03-01 17:06,admin,admin,
939,127737,6764,35227,6640,0,N,N,N,CP_Drtn,TT_Task,DT_FixedDrtn,TK_NotStart,HHI.1358,"Backgouge & NDT Inside Horizontal Seam between Shell Course# 3 & 4""""",,450,0,10,0,94.222222,94.222222,10,33.066667,0,33.066667,,,,2014-06-11 07:00,2014-06-11 17:00,,2014-04-20 07:00,2014-04-20 17:00,2014-04-20 07:00,2014-04-20 17:00,2014-04-20 07:00,2014-04-20 17:00,2014-06-11 07:00,2014-06-11 17:00,,PT_Normal,,,,,WfzBcSGyR4aqWrOGE76aHA,gYcj4lXvR+KQMsgBStkz8w,,,N,0,0,,,2014-02-17 15:27,2014-03-01 17:06,admin,admin,
940,127738,6764,35227,6640,0,N,N,N,CP_Drtn,TT_Task,DT_FixedDrtn,TK_NotStart,HHI.1359,"Weld Inner Horizontal Seam between Shell Course # 3 & 4""""",,450,0,10,0,405.333332,405.333332,10,128,0,128,,,,2014-06-12 07:00,2014-06-12 17:00,,2014-04-21 07:00,2014-04-21 17:00,2014-04-21 07:00,2014-04-21 17:00,2014-04-21 07:00,2014-04-21 17:00,2014-06-12 07:00,2014-06-12 17:00,,PT_Normal,,,,,T400Ffx9TBeOBOsTNYIuzg,iczYKgXwSb+xlCtZB3XHFg,,,N,0,0,,,2014-02-17 15:27,2014-03-01 17:06,admin,admin,
941,127739,6764,35227,6640,0,N,N,N,CP_Drtn,TT_Task,DT_FixedDrtn,TK_NotStart,HHI.1360,Quailty Check(Visual Inspection),,450,0,70,0,48.444444,48.444444,70,33.066667,0,33.066667,,,,2014-06-05 07:00,2014-06-12 17:00,,2014-04-14 07:00,2014-04-21 17:00,2014-04-14 07:00,2014-04-21 17:00,2014-04-14 07:00,2014-04-21 17:00,2014-06-05 07:00,2014-06-12 17:00,,PT_Normal,,,,,q2RcESckT3WqcWPJRGpfLQ,UydLAt2LRz6sGBSLU89xKQ,,,N,0,0,,,2014-02-17 15:27,2014-03-01 17:06,admin,admin,
942,127740,6764,35227,6640,0,N,N,N,CP_Drtn,TT_Task,DT_FixedDrtn,TK_NotStart,HHI.1357,"Weld Outer Horizontal Seam between Shell Course # 3 & 4""""",,450,0,20,0,405.333332,405.333332,20,128,0,128,,,,2014-06-09 07:00,2014-06-10 17:00,,2014-04-17 07:00,2014-04-19 17:00,2014-04-17 07:00,2014-04-19 17:00,2014-04-17 07:00,2014-04-19 17:00,2014-06-09 07:00,2014-06-10 17:00,,PT_Normal,,,,,2ffOFZgVTCO6/YM1Seov3g,C/NxYlZMQ16e/IuljFYlyQ,,,N,0,0,,,2014-02-17 15:27,2014-03-01 17:06,admin,admin,
943,127741,6764,35228,6640,0,N,N,N,CP_Drtn,TT_Task,DT_FixedDrtn,TK_NotStart,HHI.1361,Perform RT for Tank#1 & #2,,450,0,10,0,0,0,10,0,0,0,,,,2014-06-14 07:00,2014-06-14 17:00,,2014-04-22 07:00,2014-04-22 17:00,2014-04-22 07:00,2014-04-22 17:00,2014-04-22 07:00,2014-04-22 17:00,2014-06-14 07:00,2014-06-14 17:00,,PT_Normal,,,,,+kRWLK9sRkWq3xa3kYzpQg,aUP+CvH/Rk+3o/Lzz8hirw,,,N,0,0,,,2014-02-17 15:27,2014-03-01 17:06,admin,admin,
944,127742,6764,35229,6640,0,N,N,N,CP_Drtn,TT_Task,DT_FixedDrtn,TK_NotStart,HHI.1345,Erect & Tack Shell Course # 4 & Install Stagging Brackets,,450,0,20,0,480,480,20,48,0,48,,,,2014-06-03 07:00,2014-06-04 17:00,,2014-04-12 07:00,2014-04-13 17:00,2014-04-12 07:00,2014-04-13 17:00,2014-04-12 07:00,2014-04-13 17:00,2014-06-03 07:00,2014-06-04 17:00,,PT_Normal,,,,,+vT2tYcLTJucSNlniDSDvQ,ACHMBXqgR+mheP5wbvjRAA,,,N,0,0,,,2014-02-17 15:27,2014-03-01 17:06,admin,admin,
945,127743,6764,35229,6640,0,N,N,N,CP_Drtn,TT_Task,DT_FixedDrtn,TK_NotStart,HHI.1346,Weld Outer Vertical Seam /Install the Stairways support on Shell,,450,0,10,0,160,160,10,85.333334,0,85.333334,,,,2014-06-04 07:00,2014-06-04 17:00,,2014-04-13 07:00,2014-04-13 17:00,2014-04-13 07:00,2014-04-13 17:00,2014-04-13 07:00,2014-04-13 17:00,2014-06-04 07:00,2014-06-04 17:00,,PT_Normal,,,,,6fpbBfPORu669bkdt8J9hg,bQI2PjT/Qe6Uj/PlaH4fTw,,,N,0,0,,,2014-02-17 15:27,2014-03-01 17:06,admin,admin,
946,127744,6764,35229,6640,0,N,N,N,CP_Drtn,TT_Task,DT_FixedDrtn,TK_NotStart,HHI.1347,Backgouge & NDT Inside Vertical Seam,,450,0,10,0,80,80,10,33.066667,0,33.066667,,,,2014-06-04 07:00,2014-06-04 17:00,,2014-04-13 07:00,2014-04-13 17:00,2014-04-13 07:00,2014-04-13 17:00,2014-04-13 07:00,2014-04-13 17:00,2014-06-04 07:00,2014-06-04 17:00,,PT_Normal,,,,,222ZJF5XSEqehFiB/TncnQ,EfEbLlhjTqezakeopHISow,,,N,0,0,,,2014-02-17 15:27,2014-03-01 17:06,admin,admin,
947,127745,6764,35229,6640,0,N,N,N,CP_Drtn,TT_Task,DT_FixedDrtn,TK_NotStart,HHI.1348,Weld Inside Vertical Seam,,450,0,10,0,202.666668,202.666668,10,85.333333,0,85.333333,,,,2014-06-05 07:00,2014-06-05 17:00,,2014-04-14 07:00,2014-04-14 17:00,2014-04-14 07:00,2014-04-14 17:00,2014-04-14 07:00,2014-04-14 17:00,2014-06-05 07:00,2014-06-05 17:00,,PT_Normal,,,,,VLzQq2a3RLuXeBAEJHup1g,IZqWk6snTWGTPfgSkJn8cA,,,N,0,0,,,2014-02-17 15:27,2014-03-01 17:06,admin,admin,
948,127746,6764,35229,6640,0,N,N,N,CP_Drtn,TT_Task,DT_FixedDrtn,TK_NotStart,HHI.1349,"Weld Outer Horizontal Seam between Shell Course # 3 & 4""""",,450,0,20,0,388.266664,388.266664,20,72.96,0,72.96,,,,2014-06-07 07:00,2014-06-08 17:00,,2014-04-15 07:00,2014-04-16 17:00,2014-04-15 07:00,2014-04-16 17:00,2014-04-15 07:00,2014-04-16 17:00,2014-06-07 07:00,2014-06-08 17:00,,PT_Normal,,,,,XvRJa6LxTBGuXcB+ePjJDQ,NWO7EvrGRVSmlrex+St9iQ,,,N,0,0,,,2014-02-17 15:27,2014-03-01 17:06,admin,admin,
949,127747,6764,35229,6640,0,N,N,N,CP_Drtn,TT_Task,DT_FixedDrtn,TK_NotStart,HHI.1350,"Backgouge & NDT Inside Horizontal Seam between Shell Course# 3 & 4""""",,450,0,10,0,101.333333,101.333333,10,33.066667,0,33.066667,,,,2014-06-09 07:00,2014-06-09 17:00,,2014-04-17 07:00,2014-04-17 17:00,2014-04-17 07:00,2014-04-17 17:00,2014-04-17 07:00,2014-04-17 17:00,2014-06-09 07:00,2014-06-09 17:00,,PT_Normal,,,,,qjcbfmbhTxGJ0DYFb4d3Aw,QCQdQRkaTHGjx8jvjZdBfA,,,N,0,0,,,2014-02-17 15:27,2014-03-01 17:06,admin,admin,
950,127748,6764,35229,6640,0,N,N,N,CP_Drtn,TT_Task,DT_FixedDrtn,TK_NotStart,HHI.1351,"Weld Inner Horizontal Seam between Shell Course # 3 & 4""""",,450,0,10,0,388.266664,388.266664,10,72.96,0,72.96,,,,2014-06-10 07:00,2014-06-10 17:00,,2014-04-19 07:00,2014-04-19 17:00,2014-04-19 07:00,2014-04-19 17:00,2014-04-19 07:00,2014-04-19 17:00,2014-06-10 07:00,2014-06-10 17:00,,PT_Normal,,,,,YwEqJ6a4QsemgPm0q0d7yw,eSkDVKneQhepFA9Rl0I+QQ,,,N,0,0,,,2014-02-17 15:27,2014-03-01 17:06,admin,admin,
951,127749,6764,35229,6640,0,N,N,N,CP_Drtn,TT_Task,DT_FixedDrtn,TK_NotStart,HHI.1352,Quailty Check(Visual Inspection),,450,0,70,0,34.222222,34.222222,70,33.066667,0,33.066667,,,,2014-06-03 07:00,2014-06-10 17:00,,2014-04-12 07:00,2014-04-19 17:00,2014-04-12 07:00,2014-04-19 17:00,2014-04-12 07:00,2014-04-19 17:00,2014-06-03 07:00,2014-06-10 17:00,,PT_Normal,,,,,Y46yzsf1TwWeNd1k+YzOeg,5q4kVCTaRkysniARJbdJSQ,,,N,0,0,,,2014-02-17 15:27,2014-03-01 17:06,admin,admin,
952,127750,6764,35231,6640,0,N,N,N,CP_Drtn,TT_Task,DT_FixedDrtn,TK_NotStart,HHI.1392,Erect & Tack Shell Course # 6 & Install Stagging Brackets,,450,0,20,0,380,380,20,48,0,48,,,,2014-07-15 09:00,2014-07-19 11:00,,2014-05-17 07:00,2014-05-18 17:00,2014-05-17 07:00,2014-05-18 17:00,2014-05-17 07:00,2014-05-18 17:00,2014-07-15 09:00,2014-07-19 11:00,,PT_Normal,,,,,fA//mAkLR5mldrCzrD9w1Q,k21LxzkWQwG3mL1UyUlmow,,,N,0,0,,,2014-02-17 15:27,2014-03-01 17:06,admin,admin,
953,127751,6764,35231,6640,0,N,N,N,CP_Drtn,TT_Task,DT_FixedDrtn,TK_NotStart,HHI.1393,Weld Outer Vertical Seam,,450,0,10,0,160,160,10,42.666666,0,42.666666,,,,2014-07-16 13:00,2014-07-19 11:00,,2014-05-18 07:00,2014-05-18 17:00,2014-05-18 07:00,2014-05-18 17:00,2014-05-18 07:00,2014-05-18 17:00,2014-07-16 13:00,2014-07-19 11:00,,PT_Normal,,,,,UtnUBABTQdaVpn2w7O+sKg,pofYXxV3SjexU9vAy6wtGw,,,N,0,0,,,2014-02-17 15:27,2014-03-01 17:06,admin,admin,
954,127752,6764,35231,6640,0,N,N,N,CP_Drtn,TT_Task,DT_FixedDrtn,TK_NotStart,HHI.1394,Backgouge & NDT Inside Vertical Seam,,450,0,10,0,101.333332,101.333332,10,42.666666,0,42.666666,,,,2014-07-16 13:00,2014-07-19 11:00,,2014-05-18 07:00,2014-05-18 17:00,2014-05-18 07:00,2014-05-18 17:00,2014-05-18 07:00,2014-05-18 17:00,2014-07-16 13:00,2014-07-19 11:00,,PT_Normal,,,,,FnxATK6JRqeSshSnQCp5hQ,hrSDHfGCQjiyFvgX+YtgHA,,,N,0,0,,,2014-02-17 15:27,2014-03-01 17:06,admin,admin,
955,127753,6764,35231,6640,0,N,N,N,CP_Drtn,TT_Task,DT_FixedDrtn,TK_NotStart,HHI.1395,Weld Inside Vertical Seam,,450,0,10,0,160,160,10,42.666666,0,42.666666,,,,2014-07-19 11:00,2014-07-20 15:00,,2014-05-19 07:00,2014-05-19 17:00,2014-05-19 07:00,2014-05-19 17:00,2014-05-19 07:00,2014-05-19 17:00,2014-07-19 11:00,2014-07-20 15:00,,PT_Normal,,,,,enjGcz/6QK+iO74KBBjPHA,aOnFUpsfRLyR+4hltzh6/Q,,,N,0,0,,,2014-02-17 15:27,2014-03-01 17:06,admin,admin,
956,127754,6764,35231,6640,0,N,N,N,CP_Drtn,TT_Task,DT_FixedDrtn,TK_NotStart,HHI.1396,"""""Weld Outer Horizontal Seam between Shell Course # 5 & 6""""",,450,0,20,0,405.333336,405.333336,20,85.333333,0,85.333333,,,,2014-07-21 09:00,2014-07-24 11:00,,2014-05-20 07:00,2014-05-21 17:00,2014-05-20 07:00,2014-05-21 17:00,2014-05-20 07:00,2014-05-21 17:00,2014-07-21 09:00,2014-07-24 11:00,,PT_Normal,,,,,oByH8EmCRxa7K5g5JL6kpQ,m7mvituOQ4aJvh751qOZww,,,N,0,0,,,2014-02-17 15:27,2014-03-01 17:06,admin,admin,
957,127755,6764,35231,6640,0,N,N,N,CP_Drtn,TT_Task,DT_FixedDrtn,TK_NotStart,HHI.1397,"""""Backgouge & NDT Inside Horizontal Seam between Shell Course# 5 & 6""""",,450,0,10,0,108.444444,108.444444,10,33.066667,0,33.066667,,,,2014-07-24 11:00,2014-07-26 15:00,,2014-05-22 07:00,2014-05-22 17:00,2014-05-22 07:00,2014-05-22 17:00,2014-05-22 07:00,2014-05-22 17:00,2014-07-24 11:00,2014-07-26 15:00,,PT_Normal,,,,,fJUGgcTYQ9eRjsv3bL5oGA,4ZGfWOyHTzCNhToSEzKvuw,,,N,0,0,,,2014-02-17 15:27,2014-03-01 17:06,admin,admin,
958,127756,6764,35231,6640,0,N,N,N,CP_Drtn,TT_Task,DT_FixedDrtn,TK_NotStart,HHI.1398,"Weld Inner Horizontal Seam between Shell Course # 5 & 6""""",,450,0,10,0,202.666668,202.666668,10,85.333333,0,85.333333,,,,2014-07-27 09:00,2014-07-30 11:00,,2014-05-24 07:00,2014-05-24 17:00,2014-05-24 07:00,2014-05-24 17:00,2014-05-24 07:00,2014-05-24 17:00,2014-07-27 09:00,2014-07-30 11:00,,PT_Normal,,,,,mw+A55MMR56IaIPEYgB8Zg,fA7Xf4rrQvG2E2Hjpha8Rg,,,N,0,0,,,2014-02-17 15:27,2014-03-01 17:06,admin,admin,
959,127757,6764,35231,6640,0,N,N,N,CP_Drtn,TT_Task,DT_FixedDrtn,TK_NotStart,HHI.1399,Quailty Check(Visual Inspection),,450,0,70,0,27.111111,27.111111,70,33.066667,0,33.066667,,,,2014-07-15 09:00,2014-07-30 11:00,,2014-05-17 07:00,2014-05-24 17:00,2014-05-17 07:00,2014-05-24 17:00,2014-05-17 07:00,2014-05-24 17:00,2014-07-15 09:00,2014-07-30 11:00,,PT_Normal,,,,,E7rN/ZmVRVenfScyebMPoQ,6CDsLrXcRYeFLwBDNbzZcQ,,,N,0,0,,,2014-02-17 15:27,2014-03-01 17:06,admin,admin,
960,127758,6764,35232,6640,0,N,N,N,CP_Drtn,TT_Task,DT_FixedDrtn,TK_NotStart,HHI.1400,Erect & Tack Wind Girder,,450,0,10,0,262.666669,262.666669,10,11.377778,0,11.377778,,,,2014-07-30 11:00,2014-07-31 11:00,,2014-05-25 07:00,2014-05-25 17:00,2014-05-25 07:00,2014-05-25 17:00,2014-05-25 07:00,2014-05-25 17:00,2014-07-30 11:00,2014-07-31 11:00,,PT_Normal,,,,,TZzt51FgRNaDtLtrFnCWTQ,tMZtpSHbQAifP6LTfekxCw,,,N,0,0,,,2014-02-17 15:27,2014-03-01 17:06,admin,admin,
961,127759,6764,35232,6640,0,N,N,N,CP_Drtn,TT_Task,DT_FixedDrtn,TK_NotStart,HHI.1401,Weld Wind Girder,,450,0,30,0,576.000003,576.000003,30,85.333334,0,85.333334,,,,2014-07-31 11:00,2014-08-03 16:00,,2014-05-26 07:00,2014-05-28 17:00,2014-05-26 07:00,2014-05-28 17:00,2014-05-26 07:00,2014-05-28 17:00,2014-07-31 11:00,2014-08-03 16:00,,PT_Normal,,,,,/ecgjtGfQsqE8NhKQ8sG4g,xp0vm7vHTlCJEqO7VAe/5A,,,N,0,0,,,2014-02-17 15:27,2014-03-01 17:06,admin,admin,
962,127760,6764,35232,6640,0,N,N,N,CP_Drtn,TT_Task,DT_FixedDrtn,TK_NotStart,HHI.1402,Quailty Check(Visual Inspection & PT),,450,0,40,0,0,0,40,0,0,0,,,,2014-07-30 11:00,2014-08-03 16:00,,2014-05-25 07:00,2014-05-28 17:00,2014-05-25 07:00,2014-05-28 17:00,2014-05-25 07:00,2014-05-28 17:00,2014-07-30 11:00,2014-08-03 16:00,,PT_Normal,,,,,Yjv8eiKYS3KgaKyjD2fFzw,,,,N,0,0,,,2014-02-17 15:27,2014-03-01 17:06,admin,admin,
963,127761,6764,35233,6640,0,N,N,N,CP_Drtn,TT_Task,DT_FixedDrtn,TK_NotStart,HHI.1381,Erect & Tack Shell Course # 6 & Instal Stagging Brackets,,450,0,20,0,400,400,20,48,0,48,,,,2014-06-25 07:00,2014-06-26 17:00,,2014-05-04 07:00,2014-05-05 17:00,2014-05-04 07:00,2014-05-05 17:00,2014-05-04 07:00,2014-05-05 17:00,2014-06-25 07:00,2014-06-26 17:00,,PT_Normal,,,,,d0tTKx6sQkCK36tYtt7YLQ,Z7vRosz9RHKsQo8FrKiR3A,,,N,0,0,,,2014-02-17 15:27,2014-03-01 17:06,admin,admin,
964,127762,6764,35233,6640,0,N,N,N,CP_Drtn,TT_Task,DT_FixedDrtn,TK_NotStart,HHI.1382,Weld Outer Vertical Seam /Install the Stairways support on Shell,,450,0,10,0,181.333332,181.333332,10,42.666666,0,42.666666,,,,2014-06-26 07:00,2014-06-26 17:00,,2014-05-05 07:00,2014-05-05 17:00,2014-05-05 07:00,2014-05-05 17:00,2014-05-05 07:00,2014-05-05 17:00,2014-06-26 07:00,2014-06-26 17:00,,PT_Normal,,,,,yDakTNj0QEq8J7i3p1Uixw,gcsqm87QSF+X3wCUeZQ4Og,,,N,0,0,,,2014-02-17 15:27,2014-03-01 17:06,admin,admin,
965,127763,6764,35233,6640,0,N,N,N,CP_Drtn,TT_Task,DT_FixedDrtn,TK_NotStart,HHI.1383,Backgouge & NDT Inside Vertical Seam,,450,0,10,0,101.333332,101.333332,10,42.666666,0,42.666666,,,,2014-06-26 07:00,2014-06-26 17:00,,2014-05-05 07:00,2014-05-05 17:00,2014-05-05 07:00,2014-05-05 17:00,2014-05-05 07:00,2014-05-05 17:00,2014-06-26 07:00,2014-06-26 17:00,,PT_Normal,,,,,v5AOhzmlT9CGnLIO37q+zw,xXHPUcpxSGW/G/+ju5ThkQ,,,N,0,0,,,2014-02-17 15:27,2014-03-01 17:06,admin,admin,
966,127764,6764,35233,6640,0,N,N,N,CP_Drtn,TT_Task,DT_FixedDrtn,TK_NotStart,HHI.1384,Weld Inside Vertical Seam,,450,0,10,0,191.999998,191.999998,10,42.666666,0,42.666666,,,,2014-06-28 09:00,2014-06-29 13:00,,2014-05-06 07:00,2014-05-06 17:00,2014-05-06 07:00,2014-05-06 17:00,2014-05-06 07:00,2014-05-06 17:00,2014-06-28 09:00,2014-06-29 13:00,,PT_Normal,,,,,25fbm2N0S2eviF2MmdP7jw,hCas/G9sSHyaalclL3P0Eg,,,N,0,0,,,2014-02-17 15:27,2014-03-01 17:06,admin,admin,
967,127765,6764,35233,6640,0,N,N,N,CP_Drtn,TT_Task,DT_FixedDrtn,TK_NotStart,HHI.1385,"""""Weld Outer Horizontal Seam between Shell Course # 5 & 6""""",,450,0,20,0,405.333336,405.333336,20,85.333333,0,85.333333,,,,2014-06-29 13:00,2014-07-02 15:00,,2014-05-07 07:00,2014-05-08 17:00,2014-05-07 07:00,2014-05-08 17:00,2014-05-07 07:00,2014-05-08 17:00,2014-06-29 13:00,2014-07-02 15:00,,PT_Normal,,,,,mZak8QaXTX+9YJtd/fFkwQ,qaJOIHnlQ5qxlhS50iY0Vw,,,N,0,0,,,2014-02-17 15:27,2014-03-01 17:06,admin,admin,
968,127766,6764,35233,6640,0,N,N,N,CP_Drtn,TT_Task,DT_FixedDrtn,TK_NotStart,HHI.1386,"""""Backgouge & NDT Inside Horizontal Seam between Shell Course# 5 & 6""""",,450,0,10,0,108.444444,108.444444,10,33.066667,0,33.066667,,,,2014-07-03 09:00,2014-07-05 13:00,,2014-05-10 07:00,2014-05-10 17:00,2014-05-10 07:00,2014-05-10 17:00,2014-05-10 07:00,2014-05-10 17:00,2014-07-03 09:00,2014-07-05 13:00,,PT_Normal,,,,,BXMqFf12R12Lr9GgJu9qBA,p0beZp6LTf+DDxyLS3wvHg,,,N,0,0,,,2014-02-17 15:27,2014-03-01 17:06,admin,admin,
969,127767,6764,35233,6640,0,N,N,N,CP_Drtn,TT_Task,DT_FixedDrtn,TK_NotStart,HHI.1387,"Weld Inner Horizontal Seam between Shell Course # 5 & 6""""",,450,0,10,0,202.666668,202.666668,10,85.333333,0,85.333333,,,,2014-07-05 13:00,2014-07-07 11:00,,2014-05-11 07:00,2014-05-11 17:00,2014-05-11 07:00,2014-05-11 17:00,2014-05-11 07:00,2014-05-11 17:00,2014-07-05 13:00,2014-07-07 11:00,,PT_Normal,,,,,N9GqeFTSSiK8OhKBc3oNCg,KKSyhgtJThuUkPVdRA9saQ,,,N,0,0,,,2014-02-17 15:27,2014-03-01 17:06,admin,admin,
970,127768,6764,35233,6640,0,N,N,N,CP_Drtn,TT_Task,DT_FixedDrtn,TK_NotStart,HHI.1388,Quailty Check(Visual Inspection),,450,0,70,0,34.222222,34.222222,70,33.066667,0,33.066667,,,,2014-06-25 07:00,2014-07-07 11:00,,2014-05-04 07:00,2014-05-11 17:00,2014-05-04 07:00,2014-05-11 17:00,2014-05-04 07:00,2014-05-11 17:00,2014-06-25 07:00,2014-07-07 11:00,,PT_Normal,,,,,P5u7R9FkTDOLpiI+L8ibSw,/l5ntQ5qRUeVQgKWNHuvsA,,,N,0,0,,,2014-02-17 15:27,2014-03-01 17:06,admin,admin,
971,127769,6764,35234,6640,0,N,N,N,CP_Drtn,TT_Task,DT_FixedDrtn,TK_NotStart,HHI.1389,Erect & Tack Wind Girder,,450,0,10,0,276.888892,276.888892,10,11.377778,0,11.377778,,,,2014-07-07 11:00,2014-07-08 15:00,,2014-05-12 07:00,2014-05-12 17:00,2014-05-12 07:00,2014-05-12 17:00,2014-05-12 07:00,2014-05-12 17:00,2014-07-07 11:00,2014-07-08 15:00,,PT_Normal,,,,,+KvQa3PMSj2lOYzyLA0jIQ,KJBdyxy7Rd+5hzKKObu95w,,,N,0,0,,,2014-02-17 15:27,2014-03-01 17:06,admin,admin,
972,127770,6764,35234,6640,0,N,N,N,CP_Drtn,TT_Task,DT_FixedDrtn,TK_NotStart,HHI.1390,Weld Wind Girder,,450,0,30,0,608.000004,608.000004,30,85.333333,0,85.333333,,,,2014-07-09 09:00,2014-07-14 15:00,,2014-05-13 07:00,2014-05-15 17:00,2014-05-13 07:00,2014-05-15 17:00,2014-05-13 07:00,2014-05-15 17:00,2014-07-09 09:00,2014-07-14 15:00,,PT_Normal,,,,,dRdoqK4PSbiICJOjH3AKoQ,U5T47WE9Q46JS8OgXyuwsg,,,N,0,0,,,2014-02-17 15:27,2014-03-01 17:06,admin,admin,
973,127771,6764,35234,6640,0,N,N,N,CP_Drtn,TT_Task,DT_FixedDrtn,TK_NotStart,HHI.1391,Quailty Check(Visual Inspection & PT),,450,0,40,0,0,0,40,0,0,0,,,,2014-07-07 11:00,2014-07-14 15:00,,2014-05-12 07:00,2014-05-15 17:00,2014-05-12 07:00,2014-05-15 17:00,2014-05-12 07:00,2014-05-15 17:00,2014-07-07 11:00,2014-07-14 15:00,,PT_Normal,,,,,qlMs1vCmQb2rgRHuDsMxvw,,,,N,0,0,,,2014-02-17 15:27,2014-03-01 17:06,admin,admin,
974,127772,6764,35235,6640,0,N,N,N,CP_Drtn,TT_Task,DT_FixedDrtn,TK_NotStart,HHI.1403,Perform RT for Tank#1 & #2,,450,0,10,0,0,0,10,0,0,0,,,,2014-08-03 16:00,2014-08-04 16:00,,2014-05-29 07:00,2014-05-29 17:00,2014-05-29 07:00,2014-05-29 17:00,2014-05-29 07:00,2014-05-29 17:00,2014-08-03 16:00,2014-08-04 16:00,,PT_Normal,,,,,iPc4L5m9QgixH+HAMdCbqg,57QxJzEdjEy1pDYy8+dWuQ,,,N,0,0,,,2014-02-17 15:27,2014-03-01 17:06,admin,admin,
975,127773,6764,35237,6640,0,N,N,N,CP_Drtn,TT_Task,DT_FixedDrtn,TK_NotStart,HHI.1306,Weld Outer Vertical Seam /Install the Stairways support on Shell,,450,0,10,0,384.000002,384.000002,10,85.333333,0,85.333333,,,,2014-05-04 07:00,2014-05-04 17:00,,2014-03-12 07:00,2014-03-12 17:00,2014-03-12 07:00,2014-03-12 17:00,2014-03-12 07:00,2014-03-12 17:00,2014-05-04 07:00,2014-05-04 17:00,,PT_Normal,,,,,JLCwD7cQRoiMj01a0VvV+A,707tADBiT36iTpznAT9lJw,,,N,0,0,,,2014-02-17 15:27,2014-03-01 17:06,admin,admin,
976,127774,6764,35237,6640,0,N,N,N,CP_Drtn,TT_Task,DT_FixedDrtn,TK_NotStart,HHI.1307,"Backgouge,Grinding & NDT Inside Vertical Seam",,450,0,10,0,101.333333,101.333333,10,33.066667,0,33.066667,,,,2014-05-05 07:00,2014-05-05 17:00,,2014-03-13 07:00,2014-03-13 17:00,2014-03-13 07:00,2014-03-13 17:00,2014-03-13 07:00,2014-03-13 17:00,2014-05-05 07:00,2014-05-05 17:00,,PT_Normal,,,,,9oOodLWTTXCvbW5sVy/9Rw,Y5mnZT7TSBm50jW8sljmHQ,,,N,0,0,,,2014-02-17 15:27,2014-03-01 17:06,admin,admin,
977,127775,6764,35237,6640,0,N,N,N,CP_Drtn,TT_Task,DT_FixedDrtn,TK_NotStart,HHI.1308,Weld Inside Vertical Seam,,450,0,10,0,202.666668,202.666668,10,85.333333,0,85.333333,,,,2014-05-06 07:00,2014-05-06 17:00,,2014-03-15 07:00,2014-03-15 17:00,2014-03-15 07:00,2014-03-15 17:00,2014-03-15 07:00,2014-03-15 17:00,2014-05-06 07:00,2014-05-06 17:00,,PT_Normal,,,,,xySH5diMSUG+f8y2awKgzw,gRGcRkefSa+G/q5QAuHXWw,,,N,0,0,,,2014-02-17 15:27,2014-03-01 17:06,admin,admin,
978,127776,6764,35237,6640,0,N,N,N,CP_Drtn,TT_Task,DT_FixedDrtn,TK_NotStart,HHI.1309,"""""Weld Outer Horizontal Seam between Shell Course # 1 & 2""""",,450,0,30,0,608,608,30,166.4,0,166.4,,,,2014-05-07 07:00,2014-05-10 17:00,,2014-03-16 07:00,2014-03-18 17:00,2014-03-16 07:00,2014-03-18 17:00,2014-03-16 07:00,2014-03-18 17:00,2014-05-07 07:00,2014-05-10 17:00,,PT_Normal,,,,,4m9yz5PgSBWmOjEJ6Kk/ug,RHnTJru0R76iHXmQHz917A,,,N,0,0,,,2014-02-17 15:27,2014-03-01 17:06,admin,admin,
979,127777,6764,35237,6640,0,N,N,N,CP_Drtn,TT_Task,DT_FixedDrtn,TK_NotStart,HHI.1310,"""""Backgouge & NDT Inside Horizontal Seam between Shell Course# 1 & 2""""",,450,0,10,0,122.666668,122.666668,10,85.333333,0,85.333333,,,,2014-05-11 07:00,2014-05-11 17:00,,2014-03-19 07:00,2014-03-19 17:00,2014-03-19 07:00,2014-03-19 17:00,2014-03-19 07:00,2014-03-19 17:00,2014-05-11 07:00,2014-05-11 17:00,,PT_Normal,,,,,nIrMDSGJSgqjB2sVGOMKMg,8+rvVp0HQyyFZBlwVhrr1Q,,,N,0,0,,,2014-02-17 15:27,2014-03-01 17:06,admin,admin,
980,127778,6764,35237,6640,0,N,N,N,CP_Drtn,TT_Task,DT_FixedDrtn,TK_NotStart,HHI.1311,"Weld Inner Horizontal Seam between Shell Course # 1 & 2""""",,450,0,20,0,608,608,20,166.4,0,166.4,,,,2014-05-12 07:00,2014-05-13 17:00,,2014-03-20 07:00,2014-03-22 17:00,2014-03-20 07:00,2014-03-22 17:00,2014-03-20 07:00,2014-03-22 17:00,2014-05-12 07:00,2014-05-13 17:00,,PT_Normal,,,,,/kY1eLVfTJCoD17j1fKhdA,DqBH7cY9TT+gvwnx3WHh0A,,,N,0,0,,,2014-02-17 15:27,2014-03-01 17:06,admin,admin,
981,127779,6764,35237,6640,0,N,N,N,CP_Drtn,TT_Task,DT_FixedDrtn,TK_NotStart,HHI.1312,Weld Shell Course# 1 to Annular Plate (from inside),,450,0,10,0,405.333336,405.333336,10,85.333333,0,85.333333,,,,2014-05-14 07:00,2014-05-14 17:00,,2014-03-23 07:00,2014-03-23 17:00,2014-03-23 07:00,2014-03-23 17:00,2014-03-23 07:00,2014-03-23 17:00,2014-05-14 07:00,2014-05-14 17:00,,PT_Normal,,,,,kODfUDn+TOiutbWPcfsrNQ,/450mofTRDOrO4rxsXFkJw,,,N,0,0,,,2014-02-17 15:27,2014-03-01 17:06,admin,admin,
982,127780,6764,35237,6640,0,N,N,N,CP_Drtn,TT_Task,DT_FixedDrtn,TK_NotStart,HHI.1315,Quailty Check(Visual Inspection),,450,0,140,0,27.111111,27.111111,140,33.066667,0,33.066667,,,,2014-05-03 07:00,2014-05-18 17:00,,2014-03-11 07:00,2014-03-26 17:00,2014-03-11 07:00,2014-03-26 17:00,2014-03-11 07:00,2014-03-26 17:00,2014-05-03 07:00,2014-05-18 17:00,,PT_Normal,,,,,qAFrxdQhSMiBXSO3K/r0sg,8mpLc6WpSQyUv0i4MzDXkg,,,N,0,0,,,2014-02-17 15:27,2014-03-01 17:06,admin,admin,
983,127781,6764,35237,6640,0,N,N,N,CP_Drtn,TT_Task,DT_FixedDrtn,TK_NotStart,HHI.1305,Erect & Tack Shell Course # 2 & Install Stagging Brackets,,450,0,20,0,272,272,20,32,0,32,,,,2014-05-03 07:00,2014-05-04 17:00,,2014-03-11 07:00,2014-03-12 17:00,2014-03-11 07:00,2014-03-12 17:00,2014-03-11 07:00,2014-03-12 17:00,2014-05-03 07:00,2014-05-04 17:00,,PT_Normal,,,,,dMrjQg32RvKx1ulhoEaBiQ,unUg/R+eSR+wmd6bZKX6Dw,,,N,0,0,,,2014-02-17 15:27,2014-03-01 17:06,admin,admin,
984,127782,6764,35237,6640,0,N,N,N,CP_Drtn,TT_Task,DT_FixedDrtn,TK_NotStart,HHI.1313,"Perform PT from inside,Complete the welding from outside & Perform Vaccum Box Testing",,450,0,20,0,426.666665,426.666665,20,128,0,128,,,,2014-05-15 07:00,2014-05-17 17:00,,2014-03-24 07:00,2014-03-25 17:00,2014-03-24 07:00,2014-03-25 17:00,2014-03-24 07:00,2014-03-25 17:00,2014-05-15 07:00,2014-05-17 17:00,,PT_Normal,,,,,Ex6wMMBwSnCVzP8oFK72dA,3/z/aYPjQCS5uCn+Rpp3dA,,,N,0,0,,,2014-02-17 15:27,2014-03-01 17:06,admin,admin,
985,127783,6764,35237,6640,0,N,N,N,CP_Drtn,TT_Task,DT_FixedDrtn,TK_NotStart,HHI.1314,Weld Bottom Sketch Plates to Annular Plate,,450,0,10,0,0,0,10,0,0,0,,,,2014-05-18 07:00,2014-05-18 17:00,,2014-03-26 07:00,2014-03-26 17:00,2014-03-26 07:00,2014-03-26 17:00,2014-03-26 07:00,2014-03-26 17:00,2014-05-18 07:00,2014-05-18 17:00,,PT_Normal,,,,,yZzBmvdIRASU5GCkYvofeQ,,,,N,0,0,,,2014-02-17 15:27,2014-03-01 17:06,admin,admin,
986,127784,6764,35238,6640,0,N,N,N,CP_Drtn,TT_Task,DT_FixedDrtn,TK_NotStart,HHI.1316,Erect & Tack Shell Course # 2& Install Stagging Brackets,,450,0,20,0,340,340,20,48,0,48,,,,2014-05-05 07:00,2014-05-06 17:00,,2014-03-13 07:00,2014-03-15 17:00,2014-03-13 07:00,2014-03-15 17:00,2014-03-13 07:00,2014-03-15 17:00,2014-05-05 07:00,2014-05-06 17:00,,PT_Normal,,,,,yCPiSdghTQOTryetBvjlpg,PO8G6Q4CRqCEeMnyzXhWPg,,,N,0,0,,,2014-02-17 15:27,2014-03-01 17:06,admin,admin,
987,127785,6764,35238,6640,0,N,N,N,CP_Drtn,TT_Task,DT_FixedDrtn,TK_NotStart,HHI.1317,Weld Outer Vertical Seam /Install the Stairways support on Shell,,450,0,10,0,384.000002,384.000002,10,85.333333,0,85.333333,,,,2014-05-06 07:00,2014-05-06 17:00,,2014-03-15 07:00,2014-03-15 17:00,2014-03-15 07:00,2014-03-15 17:00,2014-03-15 07:00,2014-03-15 17:00,2014-05-06 07:00,2014-05-06 17:00,,PT_Normal,,,,,GxT0PpSXQaOYv3qN1ShmJA,MoZhE+k0QICSYLyhxbT1Gg,,,N,0,0,,,2014-02-17 15:27,2014-03-01 17:06,admin,admin,
988,127786,6764,35238,6640,0,N,N,N,CP_Drtn,TT_Task,DT_FixedDrtn,TK_NotStart,HHI.1318,"Backgouge,Grinding & NDT Inside Vertical Seam",,450,0,10,0,97.111111,97.111111,10,33.066667,0,33.066667,,,,2014-05-07 07:00,2014-05-07 17:00,,2014-03-16 07:00,2014-03-16 17:00,2014-03-16 07:00,2014-03-16 17:00,2014-03-16 07:00,2014-03-16 17:00,2014-05-07 07:00,2014-05-07 17:00,,PT_Normal,,,,,2qf7/Qr3RjqV/Lp62X+eWA,x6qYZJgRRN25bJtBOUtxkw,,,N,0,0,,,2014-02-17 15:27,2014-03-01 17:06,admin,admin,
989,127787,6764,35238,6640,0,N,N,N,CP_Drtn,TT_Task,DT_FixedDrtn,TK_NotStart,HHI.1319,Weld Inside Vertical Seam,,450,0,10,0,202.666668,202.666668,10,85.333333,0,85.333333,,,,2014-05-08 07:00,2014-05-08 17:00,,2014-03-17 07:00,2014-03-17 17:00,2014-03-17 07:00,2014-03-17 17:00,2014-03-17 07:00,2014-03-17 17:00,2014-05-08 07:00,2014-05-08 17:00,,PT_Normal,,,,,QDf1W/X2QSS0D0z+/z86zA,LEpvqVJXTRalKamf5NklSw,,,N,0,0,,,2014-02-17 15:27,2014-03-01 17:06,admin,admin,
990,127788,6764,35238,6640,0,N,N,N,CP_Drtn,TT_Task,DT_FixedDrtn,TK_NotStart,HHI.1320,"""""Weld Outer Horizontal Seam between Shell Course # 1 & 2""""",,450,0,30,0,608,608,30,166.4,0,166.4,,,,2014-05-10 07:00,2014-05-12 17:00,,2014-03-18 07:00,2014-03-20 17:00,2014-03-18 07:00,2014-03-20 17:00,2014-03-18 07:00,2014-03-20 17:00,2014-05-10 07:00,2014-05-12 17:00,,PT_Normal,,,,,OH+/lYJ2QSCMDPXnT6h1hQ,l0UkGj5nTTeNYFB9rs2+WQ,,,N,0,0,,,2014-02-17 15:27,2014-03-01 17:06,admin,admin,
991,127789,6764,35238,6640,0,N,N,N,CP_Drtn,TT_Task,DT_FixedDrtn,TK_NotStart,HHI.1321,"""""Backgouge & NDT Inside Horizontal Seam between Shell Course# 1 & 2""""",,450,0,10,0,122.666668,122.666668,10,85.333333,0,85.333333,,,,2014-05-13 07:00,2014-05-13 17:00,,2014-03-22 07:00,2014-03-22 17:00,2014-03-22 07:00,2014-03-22 17:00,2014-03-22 07:00,2014-03-22 17:00,2014-05-13 07:00,2014-05-13 17:00,,PT_Normal,,,,,dSgGbdo+TPKcz3XbXzu8hw,T1p/D4z8QAuE9cMDcfZ2AQ,,,N,0,0,,,2014-02-17 15:27,2014-03-01 17:06,admin,admin,
992,127790,6764,35238,6640,0,N,N,N,CP_Drtn,TT_Task,DT_FixedDrtn,TK_NotStart,HHI.1322,"Weld Inner Horizontal Seam between Shell Course # 1 & 2""""",,450,0,20,0,608,608,20,166.4,0,166.4,,,,2014-05-14 07:00,2014-05-15 17:00,,2014-03-23 07:00,2014-03-24 17:00,2014-03-23 07:00,2014-03-24 17:00,2014-03-23 07:00,2014-03-24 17:00,2014-05-14 07:00,2014-05-15 17:00,,PT_Normal,,,,,I1Ia52+nQl+7XzVoLiRkfw,w9Ig4J2YQlGM6GlbS5ByXQ,,,N,0,0,,,2014-02-17 15:27,2014-03-01 17:06,admin,admin,
993,127791,6764,35238,6640,0,N,N,N,CP_Drtn,TT_Task,DT_FixedDrtn,TK_NotStart,HHI.1323,Weld Shell Course# 1 to Annular Plate (from inside),,450,0,10,0,405.333336,405.333336,10,85.333333,0,85.333333,,,,2014-05-17 07:00,2014-05-17 17:00,,2014-03-25 07:00,2014-03-25 17:00,2014-03-25 07:00,2014-03-25 17:00,2014-03-25 07:00,2014-03-25 17:00,2014-05-17 07:00,2014-05-17 17:00,,PT_Normal,,,,,L/OLxGJ5R3We4qVz3CCFvQ,YYw16VZqQvysi04CiC6Kzw,,,N,0,0,,,2014-02-17 15:27,2014-03-01 17:06,admin,admin,
994,127792,6764,35238,6640,0,N,N,N,CP_Drtn,TT_Task,DT_FixedDrtn,TK_NotStart,HHI.1324,"Perform PT from inside,Complete the welding from outside & Perform Vaccum Box Testing",,450,0,20,0,426.666665,426.666665,20,128,0,128,,,,2014-05-18 07:00,2014-05-19 17:00,,2014-03-26 07:00,2014-03-27 17:00,2014-03-26 07:00,2014-03-27 17:00,2014-03-26 07:00,2014-03-27 17:00,2014-05-18 07:00,2014-05-19 17:00,,PT_Normal,,,,,MVjxK3EsSKeB0jFWo9bKDA,Ije0nABvQPy3HY8VIhKIzA,,,N,0,0,,,2014-02-17 15:27,2014-03-01 17:06,admin,admin,
995,127793,6764,35238,6640,0,N,N,N,CP_Drtn,TT_Task,DT_FixedDrtn,TK_NotStart,HHI.1326,Quailty Check(Visual Inspection),,450,0,140,0,34.222222,34.222222,140,33.066667,0,33.066667,,,,2014-05-05 07:00,2014-05-20 17:00,,2014-03-13 07:00,2014-03-29 17:00,2014-03-13 07:00,2014-03-29 17:00,2014-03-13 07:00,2014-03-29 17:00,2014-05-05 07:00,2014-05-20 17:00,,PT_Normal,,,,,3/8XaHGrR4iX/mFTrE+LbA,mhGSQ7QzQ6iykEpqnzqx2g,,,N,0,0,,,2014-02-17 15:27,2014-03-01 17:06,admin,admin,
996,127794,6764,35238,6640,0,N,N,N,CP_Drtn,TT_Task,DT_FixedDrtn,TK_NotStart,HHI.1325,Weld Bottom Sketch Plates to Annular Plate,,450,0,10,0,0,0,10,0,0,0,,,,2014-05-20 07:00,2014-05-20 17:00,,2014-03-29 07:00,2014-03-29 17:00,2014-03-29 07:00,2014-03-29 17:00,2014-03-29 07:00,2014-03-29 17:00,2014-05-20 07:00,2014-05-20 17:00,,PT_Normal,,,,,V3yBKF1rTSqXAfBGDG9Xnw,,,,N,0,0,,,2014-02-17 15:27,2014-03-01 17:06,admin,admin,
997,127795,6764,35239,6640,0,N,N,N,CP_Drtn,TT_Task,DT_FixedDrtn,TK_NotStart,HHI.1327,Perform RT for Tank#1 & #2,,450,0,10,0,0,0,10,0,0,0,,,,2014-05-21 07:00,2014-05-21 17:00,,2014-03-30 07:00,2014-03-30 17:00,2014-03-30 07:00,2014-03-30 17:00,2014-03-30 07:00,2014-03-30 17:00,2014-05-21 07:00,2014-05-21 17:00,,PT_Normal,,,,,PpsonpOMQYKZGgTqf/YW2Q,fblkQIEz9UaACAlKeVUFvg,,,N,0,0,,,2014-02-17 15:27,2014-03-01 17:06,admin,admin,
998,127796,6764,35241,6640,0,N,N,N,CP_Drtn,TT_Task,DT_FixedDrtn,TK_NotStart,HHI.1267,"Install Sealent,Erect & Tack of Annular Plates",,480,0,10,0,80,80,10,8,0,8,,,,2014-03-27 07:00,2014-03-27 17:00,,2014-01-30 07:00,2014-01-30 17:00,2014-01-30 07:00,2014-01-30 17:00,2014-01-30 07:00,2014-01-30 17:00,2014-03-27 07:00,2014-03-27 17:00,,PT_Normal,,,,,qQGqChWKQsSKsZL9hlVJfA,8RcYRdIOQ+y00oMQbSGIug,,,N,0,0,,,2014-02-17 15:27,2014-03-01 17:06,admin,admin,
999,127797,6764,35241,6640,0,N,N,N,CP_Drtn,TT_Task,DT_FixedDrtn,TK_NotStart,HHI.1268,Welding of Annular Plates,,480,0,10,0,180,180,10,40,0,40,,,,2014-03-29 07:00,2014-03-29 17:00,,2014-02-01 07:00,2014-02-01 17:00,2014-02-01 07:00,2014-02-01 17:00,2014-02-01 07:00,2014-02-01 17:00,2014-03-29 07:00,2014-03-29 17:00,,PT_Normal,,,,,vgzVuukXSjO8VRkOGZhjXw,pVYtuz2QTSytYQBQgRhwZw,,,N,0,0,,,2014-02-17 15:27,2014-03-01 17:06,admin,admin,
1000,127798,6764,35241,6640,0,N,N,N,CP_Drtn,TT_Task,DT_FixedDrtn,TK_NotStart,HHI.1269,"Quailty Check (Visual Inspection,PT & Vaccum Box Test)",,480,0,20,0,40,40,20,40,0,40,,,,2014-03-27 07:00,2014-03-29 17:00,,2014-01-30 07:00,2014-02-01 17:00,2014-01-30 07:00,2014-02-01 17:00,2014-01-30 07:00,2014-02-01 17:00,2014-03-27 07:00,2014-03-29 17:00,,PT_Normal,,,,,6qa05+9PSuiKCHzkbiL8MQ,xH1M55lHQ2a4Tkl1ZMtFIA,,,N,0,0,,,2014-02-17 15:27,2014-03-01 17:06,admin,admin,
1001,127799,6764,35242,6640,0,N,N,N,CP_Drtn,TT_Task,DT_FixedDrtn,TK_NotStart,HHI.1270,Prepare & Lay Down Bottom Plates,,480,0,20,0,347.999998,347.999998,20,25.6,0,25.6,,,,2014-03-30 07:00,2014-03-31 17:00,,2014-02-02 07:00,2014-02-03 17:00,2014-02-02 07:00,2014-02-03 17:00,2014-02-02 07:00,2014-02-03 17:00,2014-03-30 07:00,2014-03-31 17:00,,PT_Normal,,,,,zA5E32WbRAiaPWO2j+1mzw,8kWek0qORJGIzRQnINIzTA,,,N,0,0,,,2014-02-17 15:27,2014-03-01 17:06,admin,admin,
1002,127800,6764,35242,6640,0,N,N,N,CP_Drtn,TT_Task,DT_FixedDrtn,TK_NotStart,HHI.1277,Quailty Check (Visual Inspection& Vaccum Box Test),,480,30,150,0,21.333334,21.333334,150,42.666666,0,42.666666,,,,2014-03-30 07:00,2014-04-15 17:00,,2014-02-02 07:00,2014-02-18 17:00,2014-02-02 07:00,2014-02-18 17:00,2014-02-02 07:00,2014-02-18 17:00,2014-03-30 07:00,2014-04-15 17:00,,PT_Normal,,,,,xaogjj2/RLmqTtshx2pLNQ,2HaX5W6zRsewO3i1kc5dcw,,,N,0,0,,,2014-02-17 15:27,2014-03-01 17:06,admin,admin,
1003,127801,6764,35242,6640,0,N,N,N,CP_Drtn,TT_Task,DT_FixedDrtn,TK_NotStart,HHI.1274,"Erect,Fitup of Sump",,530,50,10,0,51.999998,51.999998,10,42.666666,0,42.666666,,,,2014-04-14 07:00,2014-04-14 17:00,,2014-02-11 07:00,2014-02-11 17:00,2014-02-11 07:00,2014-02-11 17:00,2014-02-11 07:00,2014-02-11 17:00,2014-04-14 07:00,2014-04-14 17:00,,PT_Normal,,,,,5Gc6FCD2QNmjuRvhf9/1Eg,gmaELvxvTBeX+fz/qzbkDQ,,,N,0,0,,,2014-02-17 15:27,2014-03-01 17:06,admin,admin,
1004,127802,6764,35242,6640,0,N,N,N,CP_Drtn,TT_Task,DT_FixedDrtn,TK_NotStart,HHI.1276,Weld Sump,,480,0,10,0,17.066666,17.066666,10,42.666666,0,42.666666,,,,2014-04-15 07:00,2014-04-15 17:00,,2014-02-18 07:00,2014-02-18 17:00,2014-02-18 07:00,2014-02-18 17:00,2014-02-18 07:00,2014-02-18 17:00,2014-04-15 07:00,2014-04-15 17:00,,PT_Normal,,,,,ZtZuAT7yT3yomGA4fW2HvA,ZCfaIGmvQDaKAFSP0UM+3g,,,N,0,0,,,2014-02-17 15:27,2014-03-01 17:06,admin,admin,
1005,127803,6764,35242,6640,0,N,N,N,CP_Drtn,TT_Task,DT_FixedDrtn,TK_NotStart,HHI.1271,Fit/Tack Bottom Plates-Short Seams,,480,0,20,0,0,0,20,0,0,0,,,,2014-04-02 07:00,2014-04-03 17:00,,2014-02-05 07:00,2014-02-06 17:00,2014-02-05 07:00,2014-02-06 17:00,2014-02-05 07:00,2014-02-06 17:00,2014-04-02 07:00,2014-04-03 17:00,,PT_Normal,,,,,BoGIUCKxTvCa5x3xn6UGyg,,,,N,0,0,,,2014-02-17 15:27,2014-03-01 17:06,admin,admin,
1006,127804,6764,35242,6640,0,N,N,N,CP_Drtn,TT_Task,DT_FixedDrtn,TK_NotStart,HHI.1272,Weld Short Seams,,480,0,30,0,0,0,30,0,0,0,,,,2014-04-03 07:00,2014-04-06 17:00,,2014-02-06 07:00,2014-02-09 17:00,2014-02-06 07:00,2014-02-09 17:00,2014-02-06 07:00,2014-02-09 17:00,2014-04-03 07:00,2014-04-06 17:00,,PT_Normal,,,,,7vTYJMClR9u4pZnSJcUSaw,,,,N,0,0,,,2014-02-17 15:27,2014-03-01 17:06,admin,admin,
1007,127805,6764,35242,6640,0,N,N,N,CP_Drtn,TT_Task,DT_FixedDrtn,TK_NotStart,HHI.1273,Fit/Tack Bottom Plates-Long Seams,,480,0,20,0,0,0,20,0,0,0,,,,2014-04-07 07:00,2014-04-08 17:00,,2014-02-10 07:00,2014-02-11 17:00,2014-02-10 07:00,2014-02-11 17:00,2014-02-10 07:00,2014-02-11 17:00,2014-04-07 07:00,2014-04-08 17:00,,PT_Normal,,,,,/Ax9Pb+KSGykRHYDdmCDcQ,,,,N,0,0,,,2014-02-17 15:27,2014-03-01 17:06,admin,admin,
1008,127806,6764,35242,6640,0,N,N,N,CP_Drtn,TT_Task,DT_FixedDrtn,TK_NotStart,HHI.1275,Weld Long Seams,,480,0,70,0,0,0,70,0,0,0,,,,2014-04-08 07:00,2014-04-15 17:00,,2014-02-11 07:00,2014-02-18 17:00,2014-02-11 07:00,2014-02-18 17:00,2014-02-11 07:00,2014-02-18 17:00,2014-04-08 07:00,2014-04-15 17:00,,PT_Normal,,,,,4HkNKDLkQeCkmRv8ilk88g,,,,N,0,0,,,2014-02-17 15:27,2014-03-01 17:06,admin,admin,
1009,127807,6764,35244,6640,0,N,N,N,CP_Drtn,TT_Task,DT_FixedDrtn,TK_NotStart,HHI.1380,Erect & Tack Columns,,540,90,30,0,1680,1680,30,48,0,48,,,,2014-07-09 09:00,2014-07-14 15:00,,2014-05-03 07:00,2014-05-05 17:00,2014-05-03 07:00,2014-05-05 17:00,2014-05-03 07:00,2014-05-05 17:00,2014-07-09 09:00,2014-07-14 15:00,,PT_Normal,,,,,EtH+pRkQTuOQaRUcted7fg,FobBP2a4RG2YYVTNBiSr5Q,,,N,0,0,,,2014-02-17 15:27,2014-03-01 17:06,admin,admin,
1010,127808,6764,35245,6640,0,N,N,N,CP_Drtn,TT_Task,DT_FixedDrtn,TK_NotStart,HHI.1379,Erect & Tack Columns,,450,0,30,0,1680,1680,30,48,0,48,,,,2014-06-22 07:00,2014-06-24 17:00,,2014-04-30 07:00,2014-05-03 17:00,2014-04-30 07:00,2014-05-03 17:00,2014-04-30 07:00,2014-05-03 17:00,2014-06-22 07:00,2014-06-24 17:00,,PT_Normal,,,,,XgHcuigUS+S3wtKoTveTcg,Hm4+Lr04SECsNpF5aUGvLQ,,,N,0,0,,,2014-02-17 15:27,2014-03-01 17:06,admin,admin,
1011,127809,6764,35247,6640,0,N,N,N,CP_Drtn,TT_Task,DT_FixedDrtn,TK_NotStart,HHI.1465,Mechanical Completion (MCC) & Final Isnpection Before Hydrotesting,,450,0,20,0,16,16,20,40,0,40,,,,2014-09-09 11:00,2014-09-11 11:00,,2014-07-15 09:00,2014-07-19 11:00,2014-07-15 09:00,2014-07-19 11:00,2014-07-15 09:00,2014-07-19 11:00,2014-09-09 11:00,2014-09-11 11:00,,PT_Normal,,,,,3v+dsS4TTPCKBqw5gYyzXg,tVucdmFjSoST+dQLyNy4Fw,,,N,0,0,,,2014-02-17 15:27,2014-03-01 17:06,admin,admin,
1012,127810,6764,35248,6640,0,N,N,N,CP_Drtn,TT_Task,DT_FixedDrtn,TK_NotStart,HHI.1466,Mechanical Completion (MCC) & Final Inspection Before Hydrotesting,,630,0,20,0,24,24,20,40,0,40,,,,2014-10-28 16:00,2014-10-30 16:00,,2014-08-15 13:30,2014-08-17 16:00,2014-08-15 13:30,2014-08-17 16:00,2014-08-15 13:30,2014-08-17 16:00,2014-10-28 16:00,2014-10-30 16:00,,PT_Normal,,,,,hGIlCVNvTZ6JqpUH8Gp0Fg,AHg8YuA3Skq57GoXdNWleg,,,N,0,0,,,2014-02-17 15:27,2014-03-01 17:03,admin,admin,
1013,127811,6764,35250,6640,0,N,N,N,CP_Drtn,TT_Task,DT_FixedDrtn,TK_NotStart,HHI.1451,"Erect,Laydown & install Girders to Columns (2 Layers ,15 Girders)",,630,0,20,0,341.333331,341.333331,20,17.066666,0,17.066666,,,,2014-10-02 16:00,2014-10-07 16:00,,2014-07-19 11:00,2014-07-22 13:00,2014-07-19 11:00,2014-07-22 13:00,2014-07-19 11:00,2014-07-22 13:00,2014-10-02 16:00,2014-10-07 16:00,,PT_Normal,,,,,J284axSoRGSKSWPJg0yfKQ,VvaMiLZ3RAec+fg22SUkUA,,,N,0,0,,,2014-02-17 15:27,2014-03-01 17:03,admin,admin,
1014,127812,6764,35251,6640,0,N,N,N,CP_Drtn,TT_Task,DT_FixedDrtn,TK_NotStart,HHI.1463,Erect & Install Stairways & Platforms & Handrails for Roof,,630,0,20,0,341.333337,341.333337,20,17.066667,0,17.066667,,,,2014-10-27 16:00,2014-10-29 16:00,,2014-08-14 11:00,2014-08-16 16:00,2014-08-14 11:00,2014-08-16 16:00,2014-08-14 11:00,2014-08-16 16:00,2014-10-27 16:00,2014-10-29 16:00,,PT_Normal,,,,,qqBmKH1CQV6Ty7pDxofN3g,JC++5UrkQX+zfYQ2erpMKw,,,N,0,0,,,2014-02-17 15:27,2014-03-01 17:03,admin,admin,
1015,127813,6764,35251,6640,0,N,N,N,CP_Drtn,TT_Task,DT_FixedDrtn,TK_NotStart,HHI.1462,Erect & Install Stairways & Platforms for Shell,,630,0,20,0,341.333337,341.333337,20,17.066667,0,17.066667,,,,2014-10-25 16:00,2014-10-27 16:00,,2014-08-12 11:00,2014-08-14 11:00,2014-08-12 11:00,2014-08-14 11:00,2014-08-12 11:00,2014-08-14 11:00,2014-10-25 16:00,2014-10-27 16:00,,PT_Normal,,,,,8lQYqKWdREG+8mA7hQJ5Mg,8luPrszbRvCO9llbnOtarw,,,N,0,0,,,2014-02-17 15:27,2014-03-01 17:03,admin,admin,
1016,127814,6764,35251,6640,0,N,N,N,CP_Drtn,TT_Task,DT_FixedDrtn,TK_NotStart,HHI.1464,Quality Check,,630,0,10,0,0,0,10,0,0,0,,,,2014-10-27 16:00,2014-10-28 16:00,,2014-08-14 11:00,2014-08-15 13:30,2014-08-14 11:00,2014-08-15 13:30,2014-08-14 11:00,2014-08-15 13:30,2014-10-27 16:00,2014-10-28 16:00,,PT_Normal,,,,,m+Jy9hrxR7i+S6E3jr7VxA,PP9WkB+s00WruaxVYjqKcA,,,N,0,0,,,2014-02-17 15:27,2014-03-01 17:03,admin,admin,
1017,127815,6764,35252,6640,0,N,N,N,CP_Drtn,TT_Task,DT_FixedDrtn,TK_NotStart,HHI.1452,"Erect,Lay Down & Install the Rafters (170 Rafters)/ Install Internal Piping Brackets/Piping",,630,0,80,0,1343.999994,1343.999994,80,17.066666,0,17.066666,,,,2014-10-06 16:00,2014-10-15 16:00,,2014-07-21 09:00,2014-08-03 16:00,2014-07-21 09:00,2014-08-03 16:00,2014-07-21 09:00,2014-08-03 16:00,2014-10-06 16:00,2014-10-15 16:00,,PT_Normal,,,,,F6iHn9t6QGyDwr9XTzGlVw,kWd0PmqKTkONau9xeEp5/Q,,,N,0,0,,,2014-02-17 15:27,2014-03-01 17:03,admin,admin,
1018,127816,6764,35253,6640,0,N,N,N,CP_Drtn,TT_Task,DT_FixedDrtn,TK_NotStart,HHI.1453,Prepare/Lay Down Roof Plates (80 Plates),,630,0,60,0,864.000004,864.000004,60,17.066667,0,17.066667,,,,2014-10-09 16:00,2014-10-16 16:00,,2014-07-27 09:00,2014-08-04 16:00,2014-07-27 09:00,2014-08-04 16:00,2014-07-27 09:00,2014-08-04 16:00,2014-10-09 16:00,2014-10-16 16:00,,PT_Normal,,,,,2/hoYRjWSLq1OdvxDRIB3A,yaug2E1oTX++PxDKXpPz/g,,,N,0,0,,,2014-02-17 15:27,2014-03-01 17:03,admin,admin,
1019,127817,6764,35253,6640,0,N,N,N,CP_Drtn,TT_Task,DT_FixedDrtn,TK_NotStart,HHI.1454,Tacking of Roof Plates,,630,0,60,0,968,968,60,0,0,0,,,,2014-10-09 16:00,2014-10-16 16:00,,2014-07-27 09:00,2014-08-04 16:00,2014-07-27 09:00,2014-08-04 16:00,2014-07-27 09:00,2014-08-04 16:00,2014-10-09 16:00,2014-10-16 16:00,,PT_Normal,,,,,hGSeUp86QRe2ItGabhOtCQ,nU6ntAuDTyGQEMg77FJ+wA,,,N,0,0,,,2014-02-17 15:27,2014-03-01 17:03,admin,admin,
1020,127818,6764,35253,6640,0,N,N,N,CP_Drtn,TT_Task,DT_FixedDrtn,TK_NotStart,HHI.1455,Welding of Roof Plates (Short Seams),,630,0,20,0,544,544,20,128,0,128,,,,2014-10-12 16:00,2014-10-14 16:00,,2014-07-31 11:00,2014-08-02 16:00,2014-07-31 11:00,2014-08-02 16:00,2014-07-31 11:00,2014-08-02 16:00,2014-10-12 16:00,2014-10-14 16:00,,PT_Normal,,,,,oe0fST0DQLS0RReMXBypkw,lOaPZbaGRNm99bKlOQtD1w,,,N,0,0,,,2014-02-17 15:27,2014-03-01 17:03,admin,admin,
1021,127819,6764,35253,6640,0,N,N,N,CP_Drtn,TT_Task,DT_FixedDrtn,TK_NotStart,HHI.1456,Welding of Roof Plates (Long Seams),,630,0,50,0,1728.000001,1728.000001,50,249.6,0,249.6,,,,2014-10-14 16:00,2014-10-20 16:00,,2014-08-02 16:00,2014-08-07 16:00,2014-08-02 16:00,2014-08-07 16:00,2014-08-02 16:00,2014-08-07 16:00,2014-10-14 16:00,2014-10-20 16:00,,PT_Normal,,,,,gIQ2lQDzQuKdMd5PHuLpEQ,cwQbwNuoTLeV1nYINHd/XQ,,,N,0,0,,,2014-02-17 15:27,2014-03-01 17:03,admin,admin,
1022,127820,6764,35253,6640,0,N,N,N,CP_Drtn,TT_Task,DT_FixedDrtn,TK_NotStart,HHI.1457,Tack of Roof Plates to Curb Angle,,640,10,20,0,416,416,20,0,0,0,,,,2014-10-18 16:00,2014-10-20 16:00,,2014-08-04 16:00,2014-08-06 16:00,2014-08-04 16:00,2014-08-06 16:00,2014-08-04 16:00,2014-08-06 16:00,2014-10-18 16:00,2014-10-20 16:00,,PT_Normal,,,,,+Mv2ym2iRHSincJ+WGaMMg,Vz+NMYIsQ8OC+OuHlrH5Qg,,,N,0,0,,,2014-02-17 15:27,2014-03-01 17:03,admin,admin,
1023,127821,6764,35253,6640,0,N,N,N,CP_Drtn,TT_Task,DT_FixedDrtn,TK_NotStart,HHI.1458,Welding of Roof Plates to Curb Angle,,630,0,20,0,608.000003,608.000003,20,85.333333,0,85.333333,,,,2014-10-20 16:00,2014-10-22 16:00,,2014-08-07 16:00,2014-08-10 11:00,2014-08-07 16:00,2014-08-10 11:00,2014-08-07 16:00,2014-08-10 11:00,2014-10-20 16:00,2014-10-22 16:00,,PT_Normal,,,,,8x3Y5vsoQUmjLDaeV9h5XA,Tiub6DMKT7qcCORrGs6Naw,,,N,0,0,,,2014-02-17 15:27,2014-03-01 17:03,admin,admin,
1024,127822,6764,35253,6640,0,N,N,N,CP_Drtn,TT_Task,DT_FixedDrtn,TK_NotStart,HHI.1461,"Quailty Check (Visual Inspection& Vaccum Box Test,PT,Air Leak Test for Roof Manholes& Nozzles))",,630,0,130,0,27.111111,27.111111,130,33.066667,0,33.066667,,,,2014-10-09 16:00,2014-10-25 16:00,,2014-07-27 09:00,2014-08-12 11:00,2014-07-27 09:00,2014-08-12 11:00,2014-07-27 09:00,2014-08-12 11:00,2014-10-09 16:00,2014-10-25 16:00,,PT_Normal,,,,,fKl7QgB9QbmXE5P56PIibA,UKV7MRaKQD+PPWimBFGXsQ,,,N,0,0,,,2014-02-17 15:27,2014-03-01 17:03,admin,admin,
1025,127823,6764,35253,6640,0,N,N,N,CP_Drtn,TT_Task,DT_FixedDrtn,TK_NotStart,HHI.1459,"Fit,Weld Manholes ,Nozzles on Roof /install Top Platform Supports on Roof",,630,0,20,0,0,0,20,0,0,0,,,,2014-10-22 16:00,2014-10-25 16:00,,2014-08-10 11:00,2014-08-12 11:00,2014-08-10 11:00,2014-08-12 11:00,2014-08-10 11:00,2014-08-12 11:00,2014-10-22 16:00,2014-10-25 16:00,,PT_Normal,,,,,n70XXtjgTkag9Ds1VYiejA,kwVagvVoZ0mZIAWkn3VOig,,,N,0,0,,,2014-02-17 15:27,2014-03-01 17:03,admin,admin,
1026,127824,6764,35253,6640,0,N,N,N,CP_Drtn,TT_Task,DT_FixedDrtn,TK_NotStart,HHI.1460,Weld Internal Piping to Nozzle N1,,630,0,10,0,0,0,10,0,0,0,,,,2014-10-23 16:00,2014-10-25 16:00,,2014-08-11 11:00,2014-08-12 11:00,2014-08-11 11:00,2014-08-12 11:00,2014-08-11 11:00,2014-08-12 11:00,2014-10-23 16:00,2014-10-25 16:00,,PT_Normal,,,,,YutE1sQaSQKP8X/nOu7FnA,PF9Bglt11Eu6z+CjIhFQ9w,,,N,0,0,,,2014-02-17 15:27,2014-03-01 17:03,admin,admin,
1027,127825,6764,35254,6640,0,N,N,N,CP_Drtn,TT_Task,DT_FixedDrtn,TK_NotStart,HHI.1444,"""""Fit & Tack 
Shell Course # 7 & Top Curb Angle",,630,0,20,0,255.999999,255.999999,20,8.533333,0,8.533333,,,,2014-09-30 16:00,2014-10-02 16:00,,2014-07-15 09:00,2014-07-19 11:00,2014-07-15 09:00,2014-07-19 11:00,2014-07-15 09:00,2014-07-19 11:00,2014-09-30 16:00,2014-10-02 16:00,,PT_Normal,,,,,aJBoq2WjT+2jXMNIN4js2Q,4fRUXfheRh2bqNGfeOIUtA,,,N,0,0,,,2014-02-17 15:27,2014-03-01 17:03,admin,admin,
1028,127826,6764,35254,6640,0,N,N,N,CP_Drtn,TT_Task,DT_FixedDrtn,TK_NotStart,HHI.1445,Weld Outer Horizontal Seam between Shell Course # 7 & Top Curb Angle,,640,0,10,0,128,128,10,33.066667,0,33.066667,,,,2014-10-06 16:00,2014-10-07 16:00,,2014-07-19 11:00,2014-07-20 15:00,2014-07-19 11:00,2014-07-20 15:00,2014-07-19 11:00,2014-07-20 15:00,2014-10-06 16:00,2014-10-07 16:00,,PT_Normal,,,,,DUSzvhWHTAiffaCAO5KdfQ,JvvGVt45RRCRe/PZV/zULQ,,,N,0,0,,,2014-02-17 15:27,2014-03-01 17:03,admin,admin,
1029,127827,6764,35254,6640,0,N,N,N,CP_Drtn,TT_Task,DT_FixedDrtn,TK_NotStart,HHI.1446,"""""Backgouge & NDT Inside Horizontal Seam between Shell Course# 7 & Top Curb Angle",,640,10,10,0,90,90,10,33.066667,0,33.066667,,,,2014-10-06 16:00,2014-10-07 16:00,,2014-07-19 11:00,2014-07-20 15:00,2014-07-19 11:00,2014-07-20 15:00,2014-07-19 11:00,2014-07-20 15:00,2014-10-06 16:00,2014-10-07 16:00,,PT_Normal,,,,,lTLGQvTzTTWCacv9xFoTmQ,1JBzkU6KTAGLZW/N67m4PQ,,,N,0,0,,,2014-02-17 15:27,2014-03-01 17:03,admin,admin,
1030,127828,6764,35254,6640,0,N,N,N,CP_Drtn,TT_Task,DT_FixedDrtn,TK_NotStart,HHI.1448,Weld Inner Horizontal Seam between Shell Course # 7 & Top Curb Angle,,630,0,10,0,191.333334,191.333334,10,33.066667,0,33.066667,,,,2014-10-07 16:00,2014-10-08 16:00,,2014-07-22 13:00,2014-07-24 11:00,2014-07-22 13:00,2014-07-24 11:00,2014-07-22 13:00,2014-07-24 11:00,2014-10-07 16:00,2014-10-08 16:00,,PT_Normal,,,,,0IZrVG86SUSaHcUmW211Vw,xkyR5i0PQ/mxms0CJVabfg,,,N,0,0,,,2014-02-17 15:27,2014-03-01 17:03,admin,admin,
1031,127829,6764,35254,6640,0,N,N,N,CP_Drtn,TT_Task,DT_FixedDrtn,TK_NotStart,HHI.1450,Quailty Check (Visual Inspection),,630,0,50,0,42.666664,42.666664,50,42.666667,0,42.666667,,,,2014-09-30 16:00,2014-10-08 16:00,,2014-07-15 09:00,2014-07-24 11:00,2014-07-15 09:00,2014-07-24 11:00,2014-07-15 09:00,2014-07-24 11:00,2014-09-30 16:00,2014-10-08 16:00,,PT_Normal,,,,,sjdhgnWFTlmCxMKTzAOlSw,puuHkI7GSieHTAHzZ+Lr6Q,,,N,0,0,,,2014-02-17 15:27,2014-03-01 17:03,admin,admin,
1032,127830,6764,35254,6640,0,N,N,N,CP_Drtn,TT_Task,DT_FixedDrtn,TK_NotStart,HHI.1447,"Fit up,Tack of Gusset Plates to Shell",,630,0,20,0,341.333337,341.333337,20,17.066667,0,17.066667,,,,2014-10-02 16:00,2014-10-07 16:00,,2014-07-19 11:00,2014-07-22 13:00,2014-07-19 11:00,2014-07-22 13:00,2014-07-19 11:00,2014-07-22 13:00,2014-10-02 16:00,2014-10-07 16:00,,PT_Normal,,,,,Fyr84+jFQH6bMNjH7KWxUQ,WRu6BV2mTceP+d9OQ5RfBA,,,N,0,0,,,2014-02-17 15:27,2014-03-01 17:03,admin,admin,
1033,127831,6764,35254,6640,0,N,N,N,CP_Drtn,TT_Task,DT_FixedDrtn,TK_NotStart,HHI.1449,Welding of Gusset Plates,,630,0,10,0,202.666668,202.666668,10,85.333333,0,85.333333,,,,2014-10-07 16:00,2014-10-08 16:00,,2014-07-22 13:00,2014-07-24 11:00,2014-07-22 13:00,2014-07-24 11:00,2014-07-22 13:00,2014-07-24 11:00,2014-10-07 16:00,2014-10-08 16:00,,PT_Normal,,,,,bXkgoIKgQUGsPSshBynQsQ,Lx6/tZJQQuqoYcNDllu+pg,,,N,0,0,,,2014-02-17 15:27,2014-03-01 17:03,admin,admin,
1034,127832,6764,35256,6640,0,N,N,N,CP_Drtn,TT_Task,DT_FixedDrtn,TK_NotStart,HHI.1328,Erect & Tack Shell Course # 3 & Install Stagging Brackets,,450,0,20,0,500,500,20,48,0,48,,,,2014-05-21 07:00,2014-05-22 17:00,,2014-03-30 07:00,2014-03-31 17:00,2014-03-30 07:00,2014-03-31 17:00,2014-03-30 07:00,2014-03-31 17:00,2014-05-21 07:00,2014-05-22 17:00,,PT_Normal,,,,,gGfdz42BRgumJQY/lKh/Ug,3ABTqofaSwqoi3DwCST68w,,,N,0,0,,,2014-02-17 15:27,2014-03-01 17:06,admin,admin,
1035,127833,6764,35256,6640,0,N,N,N,CP_Drtn,TT_Task,DT_FixedDrtn,TK_NotStart,HHI.1329,Weld Outer Vertical Seam /Install the Stairways support on Shell,,450,0,10,0,160,160,10,85.333334,0,85.333334,,,,2014-05-22 07:00,2014-05-22 17:00,,2014-03-31 07:00,2014-03-31 17:00,2014-03-31 07:00,2014-03-31 17:00,2014-03-31 07:00,2014-03-31 17:00,2014-05-22 07:00,2014-05-22 17:00,,PT_Normal,,,,,zQaVpJzKQruc1rT3Wky52w,ecoVeevzQEO+tad5/lQwfQ,,,N,0,0,,,2014-02-17 15:27,2014-03-01 17:06,admin,admin,
1036,127834,6764,35256,6640,0,N,N,N,CP_Drtn,TT_Task,DT_FixedDrtn,TK_NotStart,HHI.1330,Backgouge & NDT Inside Vertical Seam,,450,0,10,0,80,80,10,33.066667,0,33.066667,,,,2014-05-24 07:00,2014-05-24 17:00,,2014-04-01 07:00,2014-04-01 17:00,2014-04-01 07:00,2014-04-01 17:00,2014-04-01 07:00,2014-04-01 17:00,2014-05-24 07:00,2014-05-24 17:00,,PT_Normal,,,,,UL1ePcU+RzWkPJkNCe4jcw,RnxBQ223TnKatAm23xMTiQ,,,N,0,0,,,2014-02-17 15:27,2014-03-01 17:06,admin,admin,
1037,127835,6764,35256,6640,0,N,N,N,CP_Drtn,TT_Task,DT_FixedDrtn,TK_NotStart,HHI.1331,Weld Inside Vertical Seam,,450,0,10,0,202.666668,202.666668,10,85.333333,0,85.333333,,,,2014-05-25 07:00,2014-05-25 17:00,,2014-04-02 07:00,2014-04-02 17:00,2014-04-02 07:00,2014-04-02 17:00,2014-04-02 07:00,2014-04-02 17:00,2014-05-25 07:00,2014-05-25 17:00,,PT_Normal,,,,,yFRZ76IxSla1fT60/A4whw,O+3M7U2YQ1GcZ+qy1l1zxQ,,,N,0,0,,,2014-02-17 15:27,2014-03-01 17:06,admin,admin,
1038,127836,6764,35256,6640,0,N,N,N,CP_Drtn,TT_Task,DT_FixedDrtn,TK_NotStart,HHI.1332,"Weld Outer Horizontal Seam between Shell Course # 2 & 3""""",,450,0,30,0,608,608,30,128,0,128,,,,2014-05-26 07:00,2014-05-28 17:00,,2014-04-03 07:00,2014-04-06 17:00,2014-04-03 07:00,2014-04-06 17:00,2014-04-03 07:00,2014-04-06 17:00,2014-05-26 07:00,2014-05-28 17:00,,PT_Normal,,,,,vC2euq1lRM6+ePh+PmL9QA,s5y1mgUURjiWjEIZql6yMA,,,N,0,0,,,2014-02-17 15:27,2014-03-01 17:06,admin,admin,
1039,127837,6764,35256,6640,0,N,N,N,CP_Drtn,TT_Task,DT_FixedDrtn,TK_NotStart,HHI.1333,"Backgouge & NDT Inside Horizontal Seam between Shell Course# 2 & 3""""",,450,0,10,0,87.111111,87.111111,10,33.066667,0,33.066667,,,,2014-05-29 07:00,2014-05-29 17:00,,2014-04-07 07:00,2014-04-07 17:00,2014-04-07 07:00,2014-04-07 17:00,2014-04-07 07:00,2014-04-07 17:00,2014-05-29 07:00,2014-05-29 17:00,,PT_Normal,,,,,/BX+DfIwSpC/d4h/6bPmUA,uRXIprt7R26HRCWxqUwSWQ,,,N,0,0,,,2014-02-17 15:27,2014-03-01 17:06,admin,admin,
1040,127838,6764,35256,6640,0,N,N,N,CP_Drtn,TT_Task,DT_FixedDrtn,TK_NotStart,HHI.1334,"Weld Inner Horizontal Seam between Shell Course # 2 & 3""""",,450,0,10,0,608,608,10,128,0,128,,,,2014-05-31 07:00,2014-05-31 17:00,,2014-04-08 07:00,2014-04-08 17:00,2014-04-08 07:00,2014-04-08 17:00,2014-04-08 07:00,2014-04-08 17:00,2014-05-31 07:00,2014-05-31 17:00,,PT_Normal,,,,,oNpjgwwCRwWFdv7dMxyAKw,g8Zvf4OQRG+Hk/xKjcoeZg,,,N,0,0,,,2014-02-17 15:27,2014-03-01 17:06,admin,admin,
1041,127839,6764,35256,6640,0,N,N,N,CP_Drtn,TT_Task,DT_FixedDrtn,TK_NotStart,HHI.1335,Quailty Check(Visual Inspection),,450,0,90,0,27.111111,27.111111,90,33.066667,0,33.066667,,,,2014-05-21 07:00,2014-05-31 17:00,,2014-03-30 07:00,2014-04-08 17:00,2014-03-30 07:00,2014-04-08 17:00,2014-03-30 07:00,2014-04-08 17:00,2014-05-21 07:00,2014-05-31 17:00,,PT_Normal,,,,,RHz6hDwoSVmFfIkXQsecpA,fvdhHabgRLKhlN4x489R9Q,,,N,0,0,,,2014-02-17 15:27,2014-03-01 17:06,admin,admin,
1042,127840,6764,35257,6640,0,N,N,N,CP_Drtn,TT_Task,DT_FixedDrtn,TK_NotStart,HHI.1344,Perform RT for Tank#1 & #2,,450,0,10,0,0,0,10,0,0,0,,,,2014-06-03 07:00,2014-06-03 17:00,,2014-04-12 07:00,2014-04-12 17:00,2014-04-12 07:00,2014-04-12 17:00,2014-04-12 07:00,2014-04-12 17:00,2014-06-03 07:00,2014-06-03 17:00,,PT_Normal,,,,,tPLLJXsWTHyEaUeeT9wBpQ,GWmJtkqsBUq0z1uOQfCLww,,,N,0,0,,,2014-02-17 15:27,2014-03-01 17:06,admin,admin,
1043,127841,6764,35258,6640,0,N,N,N,CP_Drtn,TT_Task,DT_FixedDrtn,TK_NotStart,HHI.1336,Erect & Tack Shell Course # 3 & Install Stagging Brackets,,450,0,20,0,560,560,20,48,0,48,,,,2014-05-24 07:00,2014-05-25 17:00,,2014-04-01 07:00,2014-04-02 17:00,2014-04-01 07:00,2014-04-02 17:00,2014-04-01 07:00,2014-04-02 17:00,2014-05-24 07:00,2014-05-25 17:00,,PT_Normal,,,,,W4jpxwFaSUaIAxz/60c7GQ,K2WkdUIHQlKIn6LCtxjcXQ,,,N,0,0,,,2014-02-17 15:27,2014-03-01 17:06,admin,admin,
1044,127842,6764,35258,6640,0,N,N,N,CP_Drtn,TT_Task,DT_FixedDrtn,TK_NotStart,HHI.1337,Weld Outer Vertical Seam /Install the Stairways support on Shell,,450,0,10,0,202.666668,202.666668,10,85.333333,0,85.333333,,,,2014-05-25 07:00,2014-05-25 17:00,,2014-04-02 07:00,2014-04-02 17:00,2014-04-02 07:00,2014-04-02 17:00,2014-04-02 07:00,2014-04-02 17:00,2014-05-25 07:00,2014-05-25 17:00,,PT_Normal,,,,,X/f16NKgQaifH0LNU3WnDA,zWO1lynvR6u/yS3Wr0KlVw,,,N,0,0,,,2014-02-17 15:27,2014-03-01 17:06,admin,admin,
1045,127843,6764,35258,6640,0,N,N,N,CP_Drtn,TT_Task,DT_FixedDrtn,TK_NotStart,HHI.1338,Backgouge & NDT Inside Vertical Seam,,450,0,10,0,108.444444,108.444444,10,33.066667,0,33.066667,,,,2014-05-26 07:00,2014-05-26 17:00,,2014-04-03 07:00,2014-04-03 17:00,2014-04-03 07:00,2014-04-03 17:00,2014-04-03 07:00,2014-04-03 17:00,2014-05-26 07:00,2014-05-26 17:00,,PT_Normal,,,,,5TIELUUGSH28c/Nb+/Q0Uw,ACgL7r7ZQcaxXhA1r6B0BA,,,N,0,0,,,2014-02-17 15:27,2014-03-01 17:06,admin,admin,
1046,127844,6764,35258,6640,0,N,N,N,CP_Drtn,TT_Task,DT_FixedDrtn,TK_NotStart,HHI.1339,Weld Inside Vertical Seam,,450,0,10,0,202.666668,202.666668,10,85.333333,0,85.333333,,,,2014-05-27 07:00,2014-05-27 17:00,,2014-04-05 07:00,2014-04-05 17:00,2014-04-05 07:00,2014-04-05 17:00,2014-04-05 07:00,2014-04-05 17:00,2014-05-27 07:00,2014-05-27 17:00,,PT_Normal,,,,,SJ8oCogPTLmyYKu6u3pNCg,YvDxFX1RQhCPMsMiNv9Tsg,,,N,0,0,,,2014-02-17 15:27,2014-03-01 17:06,admin,admin,
1047,127845,6764,35258,6640,0,N,N,N,CP_Drtn,TT_Task,DT_FixedDrtn,TK_NotStart,HHI.1340,"Weld Outer Horizontal Seam between Shell Course # 2 & 3""""",,450,0,30,0,608,608,30,128,0,128,,,,2014-05-28 07:00,2014-05-31 17:00,,2014-04-06 07:00,2014-04-08 17:00,2014-04-06 07:00,2014-04-08 17:00,2014-04-06 07:00,2014-04-08 17:00,2014-05-28 07:00,2014-05-31 17:00,,PT_Normal,,,,,7JAEic8zQDiimDpLEpICZw,z/FCNuMgTI+3N1jUISCquQ,,,N,0,0,,,2014-02-17 15:27,2014-03-01 17:06,admin,admin,
1048,127846,6764,35258,6640,0,N,N,N,CP_Drtn,TT_Task,DT_FixedDrtn,TK_NotStart,HHI.1341,"Backgouge & NDT Inside Horizontal Seam between Shell Course# 2 & 3""""",,450,0,10,0,108.444444,108.444444,10,33.066667,0,33.066667,,,,2014-06-01 07:00,2014-06-01 17:00,,2014-04-09 07:00,2014-04-09 17:00,2014-04-09 07:00,2014-04-09 17:00,2014-04-09 07:00,2014-04-09 17:00,2014-06-01 07:00,2014-06-01 17:00,,PT_Normal,,,,,aEXVj5buRWea5SuRpSu6Rg,vAVP6gxUS8ONR9/WW1eCPw,,,N,0,0,,,2014-02-17 15:27,2014-03-01 17:06,admin,admin,
1049,127847,6764,35258,6640,0,N,N,N,CP_Drtn,TT_Task,DT_FixedDrtn,TK_NotStart,HHI.1342,"Weld Inner Horizontal Seam between Shell Course # 2 & 3""""",,450,0,10,0,608,608,10,128,0,128,,,,2014-06-02 07:00,2014-06-02 17:00,,2014-04-10 07:00,2014-04-10 17:00,2014-04-10 07:00,2014-04-10 17:00,2014-04-10 07:00,2014-04-10 17:00,2014-06-02 07:00,2014-06-02 17:00,,PT_Normal,,,,,pzmQBZL4Tzq/p01We871yQ,4aVTXnzbTuWahop6aWCwyg,,,N,0,0,,,2014-02-17 15:27,2014-03-01 17:06,admin,admin,
1050,127848,6764,35258,6640,0,N,N,N,CP_Drtn,TT_Task,DT_FixedDrtn,TK_NotStart,HHI.1343,Quailty Check(Visual Inspection),,450,0,90,0,32,32,90,42.666666,0,42.666666,,,,2014-05-24 07:00,2014-06-02 17:00,,2014-04-01 07:00,2014-04-10 17:00,2014-04-01 07:00,2014-04-10 17:00,2014-04-01 07:00,2014-04-10 17:00,2014-05-24 07:00,2014-06-02 17:00,,PT_Normal,,,,,6cMi4uroTJKPhtc6WJUG7A,0jLdmfHvQTGD5tTjJPaQXA,,,N,0,0,,,2014-02-17 15:27,2014-03-01 17:06,admin,admin,
1051,127849,6764,35260,6640,0,N,N,N,CP_Drtn,TT_Task,DT_FixedDrtn,TK_NotStart,JF752.1501,"Install Valves,instruments (Supplied by client)",,0,0,10,0,0,0,10,0,0,0,,,,2015-02-03 16:00,2015-02-04 16:00,,2015-02-03 16:00,2015-02-04 16:00,2015-02-03 16:00,2015-02-04 16:00,2015-02-03 16:00,2015-02-04 16:00,2015-02-03 16:00,2015-02-04 16:00,,PT_Normal,,,,,c8EMl1gbQC6VOuAFgBvhRA,bTD7eL6rlky0ZUHPC1rYjg,,,Y,0,0,,,2014-02-17 15:27,2014-03-01 17:08,admin,admin,
1052,127850,6764,35261,6640,0,N,N,N,CP_Drtn,TT_Task,DT_FixedDrtn,TK_NotStart,JF752.1500,"Install Valves,instruments (Supplied by client)",,220,0,10,0,0,0,10,0,0,0,,,,2015-02-03 16:00,2015-02-04 16:00,,2015-01-08 16:00,2015-01-10 16:00,2015-01-08 16:00,2015-01-10 16:00,2015-01-08 16:00,2015-01-10 16:00,2015-02-03 16:00,2015-02-04 16:00,,PT_Normal,,,,,0HUNogh4R1Cak+x2T/fBdA,olpW7cQMuEuSI7nfJnv66A,,,N,0,0,,,2014-02-17 15:27,2014-03-01 17:08,admin,admin,
1053,127851,6764,35264,6640,0,N,N,N,CP_Drtn,TT_Task,DT_FixedDrtn,TK_NotStart,HHI.1483,Perform Roof Surface Preparation & Painting,,230,0,40,0,288,288,40,96,0,96,,,,2014-12-29 16:00,2015-01-03 16:00,,2014-12-02 16:00,2014-12-07 16:00,2014-12-02 16:00,2014-12-07 16:00,2014-12-02 16:00,2014-12-07 16:00,2014-12-29 16:00,2015-01-03 16:00,,PT_Normal,,,,,MhRsXJRARDuRHQRMprSUrQ,4JBkmeGwSpWdo6UfxjFHCw,,,N,0,0,,,2014-02-17 15:27,2014-03-01 17:08,admin,admin,
1054,127852,6764,35264,6640,0,N,N,N,CP_Drtn,TT_Task,DT_FixedDrtn,TK_NotStart,HHI.1482,Perform Shell Surface Preparation & Painting,,220,0,50,0,280,280,50,80,0,80,,,,2014-12-22 16:00,2014-12-28 16:00,,2014-11-26 16:00,2014-12-02 16:00,2014-11-26 16:00,2014-12-02 16:00,2014-11-26 16:00,2014-12-02 16:00,2014-12-22 16:00,2014-12-28 16:00,,PT_Normal,,,,,05GMkyRvR++Eq5dmmhgIvA,LrlXE317Q+aWuDfOzUY6MA,,,N,0,0,,,2014-02-17 15:27,2014-03-01 17:08,admin,admin,
1055,127853,6764,35264,6640,0,N,N,N,CP_Drtn,TT_Task,DT_FixedDrtn,TK_NotStart,HHI.1484,Quailty Check,,230,10,90,0,285.48,285.48,90,351.36,0,351.36,,,,2014-12-23 16:00,2015-01-03 16:00,,2014-11-26 16:00,2014-12-07 16:00,2014-11-26 16:00,2014-12-07 16:00,2014-11-26 16:00,2014-12-07 16:00,2014-12-23 16:00,2015-01-03 16:00,,PT_Normal,,,,,W718NKY9Q1agHsiSRRLnLA,yi2k371kQguON7ueEbGetQ,,,N,0,0,,,2014-02-17 15:27,2014-03-01 17:08,admin,admin,
1056,127854,6764,35265,6640,0,N,N,N,CP_Drtn,TT_Task,DT_FixedDrtn,TK_NotStart,HHI.1489,Perform Bottom Surface Preparation & Painting,,220,0,40,0,0,0,40,0,0,0,,,,2015-01-29 16:00,2015-02-03 16:00,,2015-01-04 16:00,2015-01-08 16:00,2015-01-04 16:00,2015-01-08 16:00,2015-01-04 16:00,2015-01-08 16:00,2015-01-29 16:00,2015-02-03 16:00,,PT_Normal,,,,,9Hm2nGEbS5OeUdlSQA8WZA,,,,N,0,0,,,2014-02-17 15:27,2014-03-01 17:08,admin,admin,
1057,127855,6764,35265,6640,0,N,N,N,CP_Drtn,TT_Task,DT_FixedDrtn,TK_NotStart,HHI.1487,Perform Shell course Surface Preparation & Painting,,220,0,100,0,0,0,100,0,0,0,,,,2015-01-12 16:00,2015-01-24 16:00,,2014-12-17 16:00,2014-12-29 16:00,2014-12-17 16:00,2014-12-29 16:00,2014-12-17 16:00,2014-12-29 16:00,2015-01-12 16:00,2015-01-24 16:00,,PT_Normal,,,,,wEOCU2CnQxa6Isl+baRdYQ,,,,N,0,0,,,2014-02-17 15:27,2014-03-01 17:08,admin,admin,
1058,127856,6764,35265,6640,0,N,N,N,CP_Drtn,TT_Task,DT_FixedDrtn,TK_NotStart,HHI.1485,Install Scaffoldings,,220,0,100,0,0,0,100,0,0,0,,,,2014-12-22 16:00,2015-01-03 16:00,,2014-11-26 16:00,2014-12-08 16:00,2014-11-26 16:00,2014-12-08 16:00,2014-11-26 16:00,2014-12-08 16:00,2014-12-22 16:00,2015-01-03 16:00,,PT_Normal,,,,,JTpZOcj6RRu1vsJeYbdlNg,,,,N,0,0,,,2014-02-17 15:27,2014-03-01 17:08,admin,admin,
1059,127857,6764,35265,6640,0,N,N,N,CP_Drtn,TT_Task,DT_FixedDrtn,TK_NotStart,HHI.1488,Dismantle Scaffoldings,,220,0,50,0,0,0,50,0,0,0,,,,2015-01-24 16:00,2015-01-29 16:00,,2014-12-29 16:00,2015-01-04 16:00,2014-12-29 16:00,2015-01-04 16:00,2014-12-29 16:00,2015-01-04 16:00,2015-01-24 16:00,2015-01-29 16:00,,PT_Normal,,,,,G2tbAng/SMC4/QpO1hn7QQ,,,,N,0,0,,,2014-02-17 15:27,2014-03-01 17:08,admin,admin,
1060,127858,6764,35265,6640,0,N,N,N,CP_Drtn,TT_Task,DT_FixedDrtn,TK_NotStart,HHI.1490,Quailty Check (including Holiday Test),,220,0,270,0,103.009524,103.009524,270,515.04762,0,515.04762,,,,2015-01-03 16:00,2015-02-03 16:00,,2014-12-08 16:00,2015-01-08 16:00,2014-12-08 16:00,2015-01-08 16:00,2014-12-08 16:00,2015-01-08 16:00,2015-01-03 16:00,2015-02-03 16:00,,PT_Normal,,,,,iZBw85FpRj2LINz+wZrcjQ,j+b1I3XsTtyOS2ajzUTzcA,,,N,0,0,,,2014-02-17 15:27,2014-03-01 17:08,admin,admin,
1061,127859,6764,35265,6640,0,N,N,N,CP_Drtn,TT_Task,DT_FixedDrtn,TK_NotStart,HHI.1486,Perform Roof Underside Surface Preparation & Painting,,220,0,80,0,1133.104762,1133.104762,80,206.019048,0,206.019048,,,,2015-01-03 16:00,2015-01-12 16:00,,2014-12-08 16:00,2014-12-17 16:00,2014-12-08 16:00,2014-12-17 16:00,2014-12-08 16:00,2014-12-17 16:00,2015-01-03 16:00,2015-01-12 16:00,,PT_Normal,,,,,7/OhxXZnSsyHy3v3i5PsZg,3SJgE2F2SzWf//X6uJxrHQ,,,N,0,0,,,2014-02-17 15:27,2014-03-01 17:08,admin,admin,
1062,127860,6764,35267,6640,0,N,N,N,CP_Drtn,TT_Task,DT_FixedDrtn,TK_NotStart,HHI.1478,Weld & Align Roof Columns,,220,0,20,0,0,0,20,0,0,0,,,,2014-12-21 16:00,2014-12-23 16:00,,2014-11-25 16:00,2014-11-27 16:00,2014-11-25 16:00,2014-11-27 16:00,2014-11-25 16:00,2014-11-27 16:00,2014-12-21 16:00,2014-12-23 16:00,,PT_Normal,,,,,GICFADdPTr2r7axr05yIlw,,,,N,0,0,,,2014-02-17 15:27,2014-03-01 17:08,admin,admin,
1063,127861,6764,35268,6640,0,N,N,N,CP_Drtn,TT_Task,DT_FixedDrtn,TK_NotStart,HHI.1479,Weld & Align Roof Columns,,0,0,20,0,0,0,20,0,0,0,,,,2014-12-20 16:00,2014-12-22 16:00,,2014-12-20 16:00,2014-12-22 16:00,2014-12-20 16:00,2014-12-22 16:00,2014-12-20 16:00,2014-12-22 16:00,2014-12-20 16:00,2014-12-22 16:00,,PT_Normal,,,,,viwAVmlXRFKZOCuOtcCgxA,,,,Y,0,0,,,2014-02-17 15:27,2014-03-01 17:08,admin,admin,
1064,127862,6764,35270,6640,0,N,N,N,CP_Drtn,TT_Task,DT_FixedDrtn,TK_NotStart,HHI.1474,Tank Water Filling/Settlement from Desanilated Water Tank #1,,0,0,190,0,0,0,190,0,0,0,,,,2014-10-30 16:00,2014-11-22 16:00,,2014-10-30 16:00,2014-11-22 16:00,2014-10-30 16:00,2014-11-22 16:00,2014-10-30 16:00,2014-11-22 16:00,2014-10-30 16:00,2014-11-22 16:00,,PT_Normal,,,,,xKv1mSKeSsmz9iBZ3TMV6Q,,,,Y,0,0,,,2014-02-17 15:27,2014-03-01 17:07,admin,admin,
1065,127863,6764,35270,6640,0,N,N,N,CP_Drtn,TT_Task,DT_FixedDrtn,TK_NotStart,HHI.1473,Remove Stagging Blanks/Brackets & Install Blind Flanges,,630,630,20,0,936,936,20,72,0,72,,,,2014-10-28 16:00,2014-10-30 16:00,,2014-08-15 13:30,2014-08-17 16:00,2014-08-15 13:30,2014-08-17 16:00,2014-08-15 13:30,2014-08-17 16:00,2014-10-28 16:00,2014-10-30 16:00,,PT_Normal,,,,,31zBvIbtRKiUOXYBGg78jg,0SncFAzAS+uSKytnb1gkQA,,,N,0,0,,,2014-02-17 15:27,2014-03-01 17:03,admin,admin,
1066,127864,6764,35270,6640,0,N,N,N,CP_Drtn,TT_Task,DT_FixedDrtn,TK_NotStart,HHI.1475,Hold & Inspect Water for 24 Hours,,0,0,10,0,34.133333,34.133333,10,85.333334,0,85.333334,,,,2014-11-22 16:00,2014-11-23 16:00,,2014-11-22 16:00,2014-11-23 16:00,2014-11-22 16:00,2014-11-23 16:00,2014-11-22 16:00,2014-11-23 16:00,2014-11-22 16:00,2014-11-23 16:00,,PT_Normal,,,,,lOkCLD8qR+aGGUrkSPXyRg,23RRxnjoTXGDnjKXi0T7nw,,,Y,0,0,,,2014-02-17 15:27,2014-03-01 17:07,admin,admin,
1067,127865,6764,35270,6640,0,N,N,N,CP_Drtn,TT_Task,DT_FixedDrtn,TK_NotStart,HHI.1476,Drain Water from Tank & Transfer to Deminarlized water Tanks 1&2,,0,0,190,0,80,80,190,85.333334,0,85.333334,,,,2014-11-23 16:00,2014-12-15 16:00,,2014-11-23 16:00,2014-12-15 16:00,2014-11-23 16:00,2014-12-15 16:00,2014-11-23 16:00,2014-12-15 16:00,2014-11-23 16:00,2014-12-15 16:00,,PT_Normal,,,,,90D0LpeVSFWrb6LF5uxTWw,7mdAmPHcQUe9UdxSZjAjoA,,,Y,0,0,,,2014-02-17 15:27,2014-03-01 17:08,admin,admin,
1068,127866,6764,35270,6640,0,N,N,N,CP_Drtn,TT_Task,DT_FixedDrtn,TK_NotStart,HHI.1477,"Build Mobile Scaffolding,Internal CLeaning&Dismantling/Quailty Check",,0,0,50,0,25.6,25.6,50,42.666666,0,42.666666,,,,2014-12-15 16:00,2014-12-21 16:00,,2014-12-15 16:00,2014-12-21 16:00,2014-12-15 16:00,2014-12-21 16:00,2014-12-15 16:00,2014-12-21 16:00,2014-12-15 16:00,2014-12-21 16:00,,PT_Normal,,,,,tvUL3xJER4+8DZb815m2Bw,iQMokFFQQa+i3Ymk1rKZAg,,,Y,0,0,,,2014-02-17 15:27,2014-03-01 17:08,admin,admin,
1069,127867,6764,35271,6640,0,N,N,N,CP_Drtn,TT_Task,DT_FixedDrtn,TK_NotStart,HHI.1467,Remove Stagging Blanks/Brackets & Install Blind Flanges,,450,450,20,0,105.6,105.6,20,42.666666,0,42.666666,,,,2014-09-09 11:00,2014-09-11 11:00,,2014-07-15 09:00,2014-07-19 11:00,2014-07-15 09:00,2014-07-19 11:00,2014-07-15 09:00,2014-07-19 11:00,2014-09-09 11:00,2014-09-11 11:00,,PT_Normal,,,,,i8/GYbJiSomOhw1xCv+VnQ,FCTsejdQSX+Ld8933NWwkA,,,N,0,0,,,2014-02-17 15:27,2014-03-01 17:06,admin,admin,
1070,127868,6764,35271,6640,0,N,N,N,CP_Drtn,TT_Task,DT_FixedDrtn,TK_NotStart,HHI.1468,Tank Water Filling & Settlement from Service & Fire Water Tanks,,0,0,380,0,1407.999998,1407.999998,380,3002.666666,0,3002.666666,,,,2014-09-11 11:00,2014-10-28 16:00,,2014-09-11 11:00,2014-10-28 16:00,2014-09-11 11:00,2014-10-28 16:00,2014-09-11 11:00,2014-10-28 16:00,2014-09-11 11:00,2014-10-28 16:00,,PT_Normal,,,,,58gAVwdESX+4ll1kpO5L9w,Qps1H/PJT0i+BUZpEWmViw,,,Y,0,0,,,2014-02-17 15:27,2014-03-01 17:06,admin,admin,
1071,127869,6764,35271,6640,0,N,N,N,CP_Drtn,TT_Task,DT_FixedDrtn,TK_NotStart,HHI.1469,Hold & Inspect Water for 24 Hours,,0,0,10,0,128.000001,128.000001,10,85.333333,0,85.333333,,,,2014-10-28 16:00,2014-10-29 16:00,,2014-10-28 16:00,2014-10-29 16:00,2014-10-28 16:00,2014-10-29 16:00,2014-10-28 16:00,2014-10-29 16:00,2014-10-28 16:00,2014-10-29 16:00,,PT_Normal,,,,,pMQUtbTTS/eLQ02G/L61xw,Shqbu+zrS8GOpOYwkVl4tQ,,,Y,0,0,,,2014-02-17 15:27,2014-03-01 17:03,admin,admin,
1072,127870,6764,35271,6640,0,N,N,N,CP_Drtn,TT_Task,DT_FixedDrtn,TK_NotStart,HHI.1470,Drain Water from Tank & Transfer to Desanilated water Tank#2,,0,0,190,0,420.48,420.48,190,69.12,0,69.12,,,,2014-10-29 16:00,2014-11-20 16:00,,2014-10-29 16:00,2014-11-20 16:00,2014-10-29 16:00,2014-11-20 16:00,2014-10-29 16:00,2014-11-20 16:00,2014-10-29 16:00,2014-11-20 16:00,,PT_Normal,,,,,OOoykktFTLqia/YhLrLEOw,5i/W3QpVT0e1MbsRDIT0Yg,,,Y,0,0,,,2014-02-17 15:27,2014-03-01 17:07,admin,admin,
1073,127871,6764,35271,6640,0,N,N,N,CP_Drtn,TT_Task,DT_FixedDrtn,TK_NotStart,HHI.1471,"Build Mobile Scaffolding,Internal CLeaning&Dismantling",,220,0,40,0,73.200001,73.200001,40,85.333334,0,85.333334,,,,2014-12-16 16:00,2014-12-21 16:00,,2014-11-20 16:00,2014-11-25 16:00,2014-11-20 16:00,2014-11-25 16:00,2014-11-20 16:00,2014-11-25 16:00,2014-12-16 16:00,2014-12-21 16:00,,PT_Normal,,,,,lsHf7sNlS7uARnGPWom9Gw,Xr6BSeDcTu2Vrcp5D6tioA,,,N,0,0,,,2014-02-17 15:27,2014-03-01 17:08,admin,admin,
1074,127872,6764,35271,6640,0,N,N,N,CP_Drtn,TT_Task,DT_FixedDrtn,TK_NotStart,HHI.1472,Quailty Check,,220,0,10,0,50.666666,50.666666,10,42.666667,0,42.666667,,,,2014-12-21 16:00,2014-12-22 16:00,,2014-11-25 16:00,2014-11-26 16:00,2014-11-25 16:00,2014-11-26 16:00,2014-11-25 16:00,2014-11-26 16:00,2014-12-21 16:00,2014-12-22 16:00,,PT_Normal,,,,,3JkRUeM3RjCZVNZ8P6aj5g,p4fVhhUlRYqe+kNyXTP1zA,,,N,0,0,,,2014-02-17 15:27,2014-03-01 17:08,admin,admin,
1075,127873,6764,35273,6640,0,N,N,N,CP_Drtn,TT_Task,DT_FixedDrtn,TK_NotStart,HHI.1492,Perform Roof Surface Preparation & Painting,,10,0,40,0,288,288,40,96,0,96,,,,2014-12-28 16:00,2015-01-01 16:00,,2014-12-27 16:00,2014-12-31 16:00,2014-12-27 16:00,2014-12-31 16:00,2014-12-27 16:00,2014-12-31 16:00,2014-12-28 16:00,2015-01-01 16:00,,PT_Normal,,,,,JP95WstyTDK0e+k0Wd0ZKA,8lIQEszWTWyhHn1H9K2pZA,,,N,0,0,,,2014-02-17 15:27,2014-03-01 17:08,admin,admin,
1076,127874,6764,35273,6640,0,N,N,N,CP_Drtn,TT_Task,DT_FixedDrtn,TK_NotStart,HHI.1491,Perform Shell Surface Preparation & Painting,,0,0,50,0,280,280,50,80,0,80,,,,2014-12-21 16:00,2014-12-27 16:00,,2014-12-21 16:00,2014-12-27 16:00,2014-12-21 16:00,2014-12-27 16:00,2014-12-21 16:00,2014-12-27 16:00,2014-12-21 16:00,2014-12-27 16:00,,PT_Normal,,,,,IiSzEzkRS1uyjsqwxx4fzw,eCUXkM9PQRmsxXomxbZ0mg,,,Y,0,0,,,2014-02-17 15:27,2014-03-01 17:08,admin,admin,
1077,127875,6764,35273,6640,0,N,N,N,CP_Drtn,TT_Task,DT_FixedDrtn,TK_NotStart,HHI.1493,Quailty Check,,10,10,90,0,285.48,285.48,90,351.36,0,351.36,,,,2014-12-22 16:00,2015-01-01 16:00,,2014-12-21 16:00,2014-12-31 16:00,2014-12-21 16:00,2014-12-31 16:00,2014-12-21 16:00,2014-12-31 16:00,2014-12-22 16:00,2015-01-01 16:00,,PT_Normal,,,,,3vQtNomSQn24va2C1ambcQ,tTvusFLqTSaxDR/HdpCHWQ,,,N,0,0,,,2014-02-17 15:27,2014-03-01 17:08,admin,admin,
1078,127876,6764,35274,6640,0,N,N,N,CP_Drtn,TT_Task,DT_FixedDrtn,TK_NotStart,HHI.1499,Quailty Check (including Holiday Test),,0,0,270,0,103.009524,103.009524,270,515.04762,0,515.04762,,,,2015-01-03 16:00,2015-02-03 16:00,,2015-01-03 16:00,2015-02-03 16:00,2015-01-03 16:00,2015-02-03 16:00,2015-01-03 16:00,2015-02-03 16:00,2015-01-03 16:00,2015-02-03 16:00,,PT_Normal,,,,,T2X2g5vZRZWF82JSnZty1w,/Ya8wZ1IT4O2Y54v95J7OQ,,,Y,0,0,,,2014-02-17 15:27,2014-03-01 17:08,admin,admin,
1079,127877,6764,35274,6640,0,N,N,N,CP_Drtn,TT_Task,DT_FixedDrtn,TK_NotStart,HHI.1495,Perform Roof Underside Surface Preparation & Painting,,0,0,80,0,1133.104762,1133.104762,80,206.019048,0,206.019048,,,,2015-01-01 16:00,2015-01-11 16:00,,2015-01-01 16:00,2015-01-11 16:00,2015-01-01 16:00,2015-01-11 16:00,2015-01-01 16:00,2015-01-11 16:00,2015-01-01 16:00,2015-01-11 16:00,,PT_Normal,,,,,uRrrzy4wQ3Ge0f0kQlNfXw,+xvbCV90TziEY0xSVIWBcA,,,Y,0,0,,,2014-02-17 15:27,2014-03-01 17:08,admin,admin,
1080,127878,6764,35274,6640,0,N,N,N,CP_Drtn,TT_Task,DT_FixedDrtn,TK_NotStart,HHI.1498,Perform Bottom Surface Preparation & Painting,,0,0,50,0,0,0,50,0,0,0,,,,2015-01-28 16:00,2015-02-03 16:00,,2015-01-28 16:00,2015-02-03 16:00,2015-01-28 16:00,2015-02-03 16:00,2015-01-28 16:00,2015-02-03 16:00,2015-01-28 16:00,2015-02-03 16:00,,PT_Normal,,,,,o0/rTM+YQC6Vcam2M9QP8A,gvs+9YRw8k2SvcG5xAtYLQ,,,Y,0,0,,,2014-02-17 15:27,2014-03-01 17:08,admin,admin,
1081,127879,6764,35274,6640,0,N,N,N,CP_Drtn,TT_Task,DT_FixedDrtn,TK_NotStart,HHI.1496,Perform Shell course Surface Preparation & Painting,,0,0,100,0,0,0,100,0,0,0,,,,2015-01-11 16:00,2015-01-22 16:00,,2015-01-11 16:00,2015-01-22 16:00,2015-01-11 16:00,2015-01-22 16:00,2015-01-11 16:00,2015-01-22 16:00,2015-01-11 16:00,2015-01-22 16:00,,PT_Normal,,,,,Aaq+/mroSFqazoMuRMndEw,ijZ1dp/tK0eZ20D+JBP09g,,,Y,0,0,,,2014-02-17 15:27,2014-03-01 17:08,admin,admin,
1082,127880,6764,35274,6640,0,N,N,N,CP_Drtn,TT_Task,DT_FixedDrtn,TK_NotStart,HHI.1494,Install Scaffoldings,,0,0,100,0,0,0,100,0,0,0,,,,2014-12-21 16:00,2015-01-01 16:00,,2014-12-21 16:00,2015-01-01 16:00,2014-12-21 16:00,2015-01-01 16:00,2014-12-21 16:00,2015-01-01 16:00,2014-12-21 16:00,2015-01-01 16:00,,PT_Normal,,,,,eoiyDILlQUaTwtEpzklFhA,vJCOT90M0UeGfdwvgVjfFw,,,Y,0,0,,,2014-02-17 15:27,2014-03-01 17:08,admin,admin,
1083,127881,6764,35274,6640,0,N,N,N,CP_Drtn,TT_Task,DT_FixedDrtn,TK_NotStart,HHI.1497,Dismantle Scaffoldings,,0,0,50,0,0,0,50,0,0,0,,,,2015-01-22 16:00,2015-01-28 16:00,,2015-01-22 16:00,2015-01-28 16:00,2015-01-22 16:00,2015-01-28 16:00,2015-01-22 16:00,2015-01-28 16:00,2015-01-22 16:00,2015-01-28 16:00,,PT_Normal,,,,,8mtVJps0SHWAbwS5q68Dgw,pUaLsMhLi0SY/WVus7Cl3A,,,Y,0,0,,,2014-02-17 15:27,2014-03-01 17:08,admin,admin,
1084,127882,6764,35276,6640,0,N,N,N,CP_Drtn,TT_Task,DT_FixedDrtn,TK_NotStart,HHI.1481,Install Name Plate/Attachments on shell Course #1,,0,0,10,0,51.199998,51.199998,10,42.666667,0,42.666667,,,,2014-12-20 16:00,2014-12-21 16:00,,2014-12-20 16:00,2014-12-21 16:00,2014-12-20 16:00,2014-12-21 16:00,2014-12-20 16:00,2014-12-21 16:00,2014-12-20 16:00,2014-12-21 16:00,,PT_Normal,,,,,8bzoQW+1RMe0VaWe2a2Lrw,r1rg5O8uRjG6/tPmgpcR/w,,,Y,0,0,,,2014-02-17 15:27,2014-03-01 17:08,admin,admin,
1085,127883,6764,35277,6640,0,N,N,N,CP_Drtn,TT_Task,DT_FixedDrtn,TK_NotStart,HHI.1480,Install Name Plate/Attachments on shell Course #1,,220,0,10,0,17.066666,17.066666,10,42.666666,0,42.666666,,,,2014-12-21 16:00,2014-12-22 16:00,,2014-11-25 16:00,2014-11-26 16:00,2014-11-25 16:00,2014-11-26 16:00,2014-11-25 16:00,2014-11-26 16:00,2014-12-21 16:00,2014-12-22 16:00,,PT_Normal,,,,,G/okWV8NQe+/PhlLCwwdKA,YDGRwxfaQyGRnCF0Astepw,,,N,0,0,,,2014-02-17 15:27,2014-03-01 17:08,admin,admin,
1086,127884,6764,35278,6640,0,N,N,N,CP_Drtn,TT_Task,DT_FixedDrtn,TK_NotStart,HHI.1784,AZ Handovers Area to Client,,0,0,10,0,0,0,10,0,0,0,,,,2015-02-05 16:00,2015-02-07 16:00,,2015-02-05 16:00,2015-02-07 16:00,2015-02-05 16:00,2015-02-07 16:00,2015-02-05 16:00,2015-02-07 16:00,2015-02-05 16:00,2015-02-07 16:00,,PT_Normal,,,,,hFQTVXChTKK/GvNHeHPA2g,,,,Y,0,0,,,2014-02-17 15:27,2014-03-01 17:08,admin,admin,
1087,127885,6764,35280,6640,0,N,N,N,CP_Drtn,TT_Mile,DT_FixedDrtn,TK_NotStart,HHI.1504,HHI Hand over Tank#1(10GHE11BB001) Foundation  to AZ,,0,0,0,0,0,0,0,0,0,0,2014-03-01 07:00,,,2014-03-01 07:00,2014-03-01 07:00,,2014-03-01 07:00,2014-03-01 07:00,2014-03-01 07:00,2014-03-01 07:00,2014-03-01 07:00,2014-03-01 07:00,2014-03-01 07:00,2014-03-01 07:00,CS_MSO,PT_Normal,,,,,NLCl9PMpScyEgaJL5EI2nA,cRXIe/3Eb0+WYpwfYmKuQg,,,N,0,0,,,2014-02-17 15:27,2014-03-01 14:49,admin,admin,
1088,127886,6764,35280,6640,0,N,N,N,CP_Drtn,TT_Task,DT_FixedDrtn,TK_NotStart,HHI.1505,AZ Check Tank#1 Foundation Levelness prior to Mechanical Works,,490,0,10,0,0,0,10,0,0,0,,,,2014-04-27 07:00,2014-04-27 17:00,,2014-03-01 07:00,2014-03-01 17:00,2014-03-01 07:00,2014-03-01 17:00,2014-03-01 07:00,2014-03-01 17:00,2014-04-27 07:00,2014-04-27 17:00,,PT_Normal,,,,,QWzIXPmDTFuDQRir1cLADw,JgJ3x58R+kiMjQ+4H8AKjg,,,N,0,0,,,2014-02-17 15:27,2014-03-01 17:09,admin,admin,
1089,127887,6764,35280,6640,0,N,N,N,CP_Drtn,TT_Mile,DT_FixedDrtn,TK_NotStart,HHI.1506,HHI Hand over Tank#2(10GHE12BB001) Foundation to AZ,,450,0,0,0,0,0,0,0,0,0,,,,2014-05-04 07:00,2014-05-04 07:00,,2014-03-12 07:00,2014-03-12 07:00,2014-03-12 07:00,2014-03-12 07:00,2014-03-12 07:00,2014-03-12 07:00,2014-05-04 07:00,2014-05-04 07:00,,PT_Normal,,,,,9kU68/KMTemHp/tcGkD1XA,u5yRzo6ng0i57qVZ+k8HVA,,,N,0,0,,,2014-02-17 15:27,2014-03-01 17:09,admin,admin,
1090,127888,6764,35280,6640,0,N,N,N,CP_Drtn,TT_Task,DT_FixedDrtn,TK_NotStart,HHI.1507,AZ Check Tank#2 Foundation Levelness prior to Mechanical Works,,450,0,10,0,0,0,10,0,0,0,,,,2014-05-04 07:00,2014-05-04 17:00,,2014-03-12 07:00,2014-03-12 17:00,2014-03-12 07:00,2014-03-12 17:00,2014-03-12 07:00,2014-03-12 17:00,2014-05-04 07:00,2014-05-04 17:00,,PT_Normal,,,,,3Pv5X0pAS1Gyf9pBzxgHPw,FBVc8tH3tkyx7oCkW9Cxjg,,,N,0,0,,,2014-02-17 15:27,2014-03-01 17:09,admin,admin,
1091,127889,6764,35283,6640,0,N,N,N,CP_Drtn,TT_Task,DT_FixedDrtn,TK_NotStart,HHI.1665,"Fit,Weld Nozzle on Shell",,450,0,10,0,0,0,10,0,0,0,,,,2014-09-18 16:00,2014-09-20 16:00,,2014-08-01 13:30,2014-08-02 16:00,2014-08-01 13:30,2014-08-02 16:00,2014-08-01 13:30,2014-08-02 16:00,2014-09-18 16:00,2014-09-20 16:00,,PT_Normal,,,,,Efsce7DPSOy69xDg6CCuxQ,fbldQ+V3kkeOO57Zn+YcKg,,,N,0,0,,,2014-02-17 15:27,2014-03-01 17:09,admin,admin,
1092,127890,6764,35283,6640,0,N,N,N,CP_Drtn,TT_Task,DT_FixedDrtn,TK_NotStart,HHI.1658,Erect & Tack Shell Course # 7 & Internal Stagging Brackets,,450,0,10,0,400,400,10,48,0,48,,,,2014-09-12 13:30,2014-09-13 16:00,,2014-07-21 09:00,2014-07-22 13:00,2014-07-21 09:00,2014-07-22 13:00,2014-07-21 09:00,2014-07-22 13:00,2014-09-12 13:30,2014-09-13 16:00,,PT_Normal,,,,,xkCmvMQ4SROFxNcdT41HFA,QX/248gwrUqHflvOqq0LRA,,,N,0,0,,,2014-02-17 15:27,2014-03-01 17:09,admin,admin,
1093,127891,6764,35283,6640,0,N,N,N,CP_Drtn,TT_Task,DT_FixedDrtn,TK_NotStart,HHI.1659,Weld Outer Vertical Seam /Install the Stairways support on Shell,,450,0,10,0,181.333332,181.333332,10,42.666666,0,42.666666,,,,2014-09-13 16:00,2014-09-14 16:00,,2014-07-22 13:00,2014-07-24 11:00,2014-07-22 13:00,2014-07-24 11:00,2014-07-22 13:00,2014-07-24 11:00,2014-09-13 16:00,2014-09-14 16:00,,PT_Normal,,,,,yKcyb62BQM2MIi6+GGs4jQ,t/aTCletXUiZ+/C8xt3HWQ,,,N,0,0,,,2014-02-17 15:27,2014-03-01 17:09,admin,admin,
1094,127892,6764,35283,6640,0,N,N,N,CP_Drtn,TT_Task,DT_FixedDrtn,TK_NotStart,HHI.1660,Backgouge & NDT Inside Vertical Seam,,450,0,10,0,101.333332,101.333332,10,42.666666,0,42.666666,,,,2014-09-14 16:00,2014-09-15 16:00,,2014-07-24 11:00,2014-07-26 15:00,2014-07-24 11:00,2014-07-26 15:00,2014-07-24 11:00,2014-07-26 15:00,2014-09-14 16:00,2014-09-15 16:00,,PT_Normal,,,,,CIVxxZeoT3SC3CGK/rq0NA,XRhI8HEMa0OXRr6h+8ni8g,,,N,0,0,,,2014-02-17 15:27,2014-03-01 17:09,admin,admin,
1095,127893,6764,35283,6640,0,N,N,N,CP_Drtn,TT_Task,DT_FixedDrtn,TK_NotStart,HHI.1661,Weld Inside Vertical Seam,,450,0,10,0,191.999998,191.999998,10,42.666666,0,42.666666,,,,2014-09-15 16:00,2014-09-16 16:00,,2014-07-27 09:00,2014-07-30 11:00,2014-07-27 09:00,2014-07-30 11:00,2014-07-27 09:00,2014-07-30 11:00,2014-09-15 16:00,2014-09-16 16:00,,PT_Normal,,,,,KDqsRZ6/STOQXHP98ioQ4w,KkFfP52C0EWjcgdNZVQt1w,,,N,0,0,,,2014-02-17 15:27,2014-03-01 17:09,admin,admin,
1096,127894,6764,35283,6640,0,N,N,N,CP_Drtn,TT_Task,DT_FixedDrtn,TK_NotStart,HHI.1662,"""""Weld Outer Horizontal Seam between Shell Course # 6 & 7",,450,0,10,0,405.333336,405.333336,10,85.333333,0,85.333333,,,,2014-09-16 16:00,2014-09-17 16:00,,2014-07-30 11:00,2014-07-31 11:00,2014-07-30 11:00,2014-07-31 11:00,2014-07-30 11:00,2014-07-31 11:00,2014-09-16 16:00,2014-09-17 16:00,,PT_Normal,,,,,HHg54JDfRJi5FQVa9EA19w,IoakFKiJRUyxsO+j8GLimA,,,N,0,0,,,2014-02-17 15:27,2014-03-01 17:09,admin,admin,
1097,127895,6764,35283,6640,0,N,N,N,CP_Drtn,TT_Task,DT_FixedDrtn,TK_NotStart,HHI.1663,"""""Backgouge & NDT Inside Horizontal Seam between Shell Course# 6 & 7",,450,0,10,0,108.444444,108.444444,10,33.066667,0,33.066667,,,,2014-09-17 16:00,2014-09-18 16:00,,2014-07-31 11:00,2014-08-01 13:30,2014-07-31 11:00,2014-08-01 13:30,2014-07-31 11:00,2014-08-01 13:30,2014-09-17 16:00,2014-09-18 16:00,,PT_Normal,,,,,D/1ZG1teQ6eT2hHI6joMCA,kbsz4lZ8c0yA0hlUYpMxfA,,,N,0,0,,,2014-02-17 15:27,2014-03-01 17:09,admin,admin,
1098,127896,6764,35283,6640,0,N,N,N,CP_Drtn,TT_Task,DT_FixedDrtn,TK_NotStart,HHI.1664,Weld Inner Horizontal Seam between Shell Course # 6 & 7,,450,0,10,0,202.666668,202.666668,10,85.333333,0,85.333333,,,,2014-09-18 16:00,2014-09-20 16:00,,2014-08-01 13:30,2014-08-02 16:00,2014-08-01 13:30,2014-08-02 16:00,2014-08-01 13:30,2014-08-02 16:00,2014-09-18 16:00,2014-09-20 16:00,,PT_Normal,,,,,f7TV4UBmQMey7BJi556SjA,gwfgMSJO70uTSAnRstDZjw,,,N,0,0,,,2014-02-17 15:27,2014-03-01 17:09,admin,admin,
1099,127897,6764,35283,6640,0,N,N,N,CP_Drtn,TT_Task,DT_FixedDrtn,TK_NotStart,HHI.1666,"Quailty Check(Visual Inspection,PT,Air Leak Test for Shell Nozzle)",,450,0,60,0,34.222222,34.222222,60,33.066667,0,33.066667,,,,2014-09-13 16:00,2014-09-20 16:00,,2014-07-22 13:00,2014-08-02 16:00,2014-07-22 13:00,2014-08-02 16:00,2014-07-22 13:00,2014-08-02 16:00,2014-09-13 16:00,2014-09-20 16:00,,PT_Normal,,,,,j8Zgn2lfRGOuwxRJpZdEOA,nfdokaSBAEycU3V5Clg2eA,,,N,0,0,,,2014-02-17 15:27,2014-03-01 17:09,admin,admin,
1100,127898,6764,35284,6640,0,N,N,N,CP_Drtn,TT_Task,DT_FixedDrtn,TK_NotStart,HHI.1667,Erect & Tack Wind Girder,,450,0,10,0,276.888892,276.888892,10,11.377778,0,11.377778,,,,2014-09-20 16:00,2014-09-21 16:00,,2014-08-02 16:00,2014-08-03 16:00,2014-08-02 16:00,2014-08-03 16:00,2014-08-02 16:00,2014-08-03 16:00,2014-09-20 16:00,2014-09-21 16:00,,PT_Normal,,,,,RhRqK44GT3G6cDyDEwIOJw,W0VDrx5zL0O+CuDm0AjsLA,,,N,0,0,,,2014-02-17 15:27,2014-03-01 17:09,admin,admin,
1101,127899,6764,35284,6640,0,N,N,N,CP_Drtn,TT_Task,DT_FixedDrtn,TK_NotStart,HHI.1668,Weld Wind Girder,,450,0,20,0,608.000004,608.000004,20,85.333333,0,85.333333,,,,2014-09-21 16:00,2014-09-24 16:00,,2014-08-03 16:00,2014-08-05 16:00,2014-08-03 16:00,2014-08-05 16:00,2014-08-03 16:00,2014-08-05 16:00,2014-09-21 16:00,2014-09-24 16:00,,PT_Normal,,,,,8BHCbyuIRAS54yRB3bfg7g,Cex1l01ELEe1CGf2F+EtLQ,,,N,0,0,,,2014-02-17 15:27,2014-03-01 17:09,admin,admin,
1102,127900,6764,35284,6640,0,N,N,N,CP_Drtn,TT_Task,DT_FixedDrtn,TK_NotStart,HHI.1669,Quailty Check(Visual Inspection & PT),,450,0,30,0,0,0,30,0,0,0,,,,2014-09-20 16:00,2014-09-24 16:00,,2014-08-02 16:00,2014-08-05 16:00,2014-08-02 16:00,2014-08-05 16:00,2014-08-02 16:00,2014-08-05 16:00,2014-09-20 16:00,2014-09-24 16:00,,PT_Normal,,,,,c7D7N5mLSNGn2HQp6OSamw,Nx0O2WTsaE6Rv41pm1iwJg,,,N,0,0,,,2014-02-17 15:27,2014-03-01 17:09,admin,admin,
1103,127901,6764,35285,6640,0,N,N,N,CP_Drtn,TT_Task,DT_FixedDrtn,TK_NotStart,HHI.1674,"""""Weld Outer Horizontal Seam between Shell Course # 6 & 7",,450,0,10,0,405.333336,405.333336,10,85.333333,0,85.333333,,,,2014-09-28 16:00,2014-09-29 16:00,,2014-08-09 11:00,2014-08-10 11:00,2014-08-09 11:00,2014-08-10 11:00,2014-08-09 11:00,2014-08-10 11:00,2014-09-28 16:00,2014-09-29 16:00,,PT_Normal,,,,,KfqNUiQVTYGfh147txv23A,P4rQfWq6SEyJ8aH/z/YP+w,,,N,0,0,,,2014-02-17 15:27,2014-03-01 17:09,admin,admin,
1104,127902,6764,35285,6640,0,N,N,N,CP_Drtn,TT_Task,DT_FixedDrtn,TK_NotStart,HHI.1675,"""""Backgouge & NDT Inside Horizontal Seam between Shell Course# 6 & 7",,450,0,10,0,108.444444,108.444444,10,33.066667,0,33.066667,,,,2014-09-29 16:00,2014-09-30 16:00,,2014-08-10 11:00,2014-08-11 11:00,2014-08-10 11:00,2014-08-11 11:00,2014-08-10 11:00,2014-08-11 11:00,2014-09-29 16:00,2014-09-30 16:00,,PT_Normal,,,,,+P2VRfMwSBeYZ/olzDhBBg,ehKZz8Hcj0WD1NBef6oyew,,,N,0,0,,,2014-02-17 15:27,2014-03-01 17:09,admin,admin,
1105,127903,6764,35285,6640,0,N,N,N,CP_Drtn,TT_Task,DT_FixedDrtn,TK_NotStart,HHI.1676,Weld Inner Horizontal Seam between Shell Course # 6 & 7,,450,0,10,0,202.666668,202.666668,10,85.333333,0,85.333333,,,,2014-09-30 16:00,2014-10-01 16:00,,2014-08-11 11:00,2014-08-12 11:00,2014-08-11 11:00,2014-08-12 11:00,2014-08-11 11:00,2014-08-12 11:00,2014-09-30 16:00,2014-10-01 16:00,,PT_Normal,,,,,MRfqcvb2R5aFpAhrsR9Pvg,Nt8SNANrckOWrkmihX2PaA,,,N,0,0,,,2014-02-17 15:27,2014-03-01 17:09,admin,admin,
1106,127904,6764,35285,6640,0,N,N,N,CP_Drtn,TT_Task,DT_FixedDrtn,TK_NotStart,HHI.1678,"Quailty Check(Visual Inspection,PT,Air Leak Test for Shell Nozzle)",,450,0,60,0,27.111111,27.111111,60,33.066667,0,33.066667,,,,2014-09-25 16:00,2014-10-02 16:00,,2014-08-06 16:00,2014-08-13 11:00,2014-08-06 16:00,2014-08-13 11:00,2014-08-06 16:00,2014-08-13 11:00,2014-09-25 16:00,2014-10-02 16:00,,PT_Normal,,,,,vNlmEE0SS52hJxefw1YCVw,oMjkAU+dx0a7+D1b/TUMdQ,,,N,0,0,,,2014-02-17 15:27,2014-03-01 17:09,admin,admin,
1107,127905,6764,35285,6640,0,N,N,N,CP_Drtn,TT_Task,DT_FixedDrtn,TK_NotStart,HHI.1677,"Fit,Weld Nozzle on Shell",,450,0,10,0,0,0,10,0,0,0,,,,2014-10-01 16:00,2014-10-02 16:00,,2014-08-12 11:00,2014-08-13 11:00,2014-08-12 11:00,2014-08-13 11:00,2014-08-12 11:00,2014-08-13 11:00,2014-10-01 16:00,2014-10-02 16:00,,PT_Normal,,,,,KpVDKjKIS8+B3zZHqxxokg,fbldQ+V3kkeOO57Zn+YcKg,,,N,0,0,,,2014-02-17 15:27,2014-03-01 17:09,admin,admin,
1108,127906,6764,35285,6640,0,N,N,N,CP_Drtn,TT_Task,DT_FixedDrtn,TK_NotStart,HHI.1670,Erect & Tack Shell Course # 7 & Install Stagging Brackets,,450,0,10,0,380,380,10,48,0,48,,,,2014-09-22 16:00,2014-09-24 16:00,,2014-08-04 16:00,2014-08-05 16:00,2014-08-04 16:00,2014-08-05 16:00,2014-08-04 16:00,2014-08-05 16:00,2014-09-22 16:00,2014-09-24 16:00,,PT_Normal,,,,,GSRn7Xl/TRefjnQd5GkRUQ,j7+wBJGPkUKSeZtc8CXukw,,,N,0,0,,,2014-02-17 15:27,2014-03-01 17:09,admin,admin,
1109,127907,6764,35285,6640,0,N,N,N,CP_Drtn,TT_Task,DT_FixedDrtn,TK_NotStart,HHI.1671,Weld Outer Vertical Seam /Install the Stairways support on Shell,,450,0,10,0,160,160,10,42.666666,0,42.666666,,,,2014-09-24 16:00,2014-09-25 16:00,,2014-08-05 16:00,2014-08-06 16:00,2014-08-05 16:00,2014-08-06 16:00,2014-08-05 16:00,2014-08-06 16:00,2014-09-24 16:00,2014-09-25 16:00,,PT_Normal,,,,,IaM3/kFxT7KFWgl7qw73dw,Ywii8SQ6TUSR0/7zF3oMLQ,,,N,0,0,,,2014-02-17 15:27,2014-03-01 17:09,admin,admin,
1110,127908,6764,35285,6640,0,N,N,N,CP_Drtn,TT_Task,DT_FixedDrtn,TK_NotStart,HHI.1672,Backgouge & NDT Inside Vertical Seam,,450,0,10,0,101.333332,101.333332,10,42.666666,0,42.666666,,,,2014-09-25 16:00,2014-09-27 16:00,,2014-08-06 16:00,2014-08-07 16:00,2014-08-06 16:00,2014-08-07 16:00,2014-08-06 16:00,2014-08-07 16:00,2014-09-25 16:00,2014-09-27 16:00,,PT_Normal,,,,,BtJFyYcfThqs21F2thnwmg,P+z0D6ucMEaXM8rXtcjHLw,,,N,0,0,,,2014-02-17 15:27,2014-03-01 17:09,admin,admin,
1111,127909,6764,35285,6640,0,N,N,N,CP_Drtn,TT_Task,DT_FixedDrtn,TK_NotStart,HHI.1673,Weld Inside Vertical Seam,,450,0,10,0,160,160,10,42.666666,0,42.666666,,,,2014-09-27 16:00,2014-09-28 16:00,,2014-08-07 16:00,2014-08-09 11:00,2014-08-07 16:00,2014-08-09 11:00,2014-08-07 16:00,2014-08-09 11:00,2014-09-27 16:00,2014-09-28 16:00,,PT_Normal,,,,,8eBQe52IS0KFacn55jOE7g,9Ef3cSFTYkKg8F/6rYNSQw,,,N,0,0,,,2014-02-17 15:27,2014-03-01 17:09,admin,admin,
1112,127910,6764,35286,6640,0,N,N,N,CP_Drtn,TT_Task,DT_FixedDrtn,TK_NotStart,HHI.1682,Perform RT for Tank#1 & #2,,450,0,10,0,0,0,10,0,0,0,,,,2014-10-08 16:00,2014-10-09 16:00,,2014-08-16 16:00,2014-08-17 16:00,2014-08-16 16:00,2014-08-17 16:00,2014-08-16 16:00,2014-08-17 16:00,2014-10-08 16:00,2014-10-09 16:00,,PT_Normal,,,,,aN5JzHJ+S6SWkUZVvpezyQ,ez/0cVx7D0286dR2nOyvog,,,N,0,0,,,2014-02-17 15:27,2014-03-01 17:09,admin,admin,
1113,127911,6764,35287,6640,0,N,N,N,CP_Drtn,TT_Task,DT_FixedDrtn,TK_NotStart,HHI.1679,Erect & Tack Wind Girder,,450,0,10,0,262.666669,262.666669,10,11.377778,0,11.377778,,,,2014-10-02 16:00,2014-10-06 16:00,,2014-08-13 11:00,2014-08-14 11:00,2014-08-13 11:00,2014-08-14 11:00,2014-08-13 11:00,2014-08-14 11:00,2014-10-02 16:00,2014-10-06 16:00,,PT_Normal,,,,,RmUEQ7YlS6SlEITyAbSIOw,6Q/r8+MVbkCnpR8ah8wZrQ,,,N,0,0,,,2014-02-17 15:27,2014-03-01 17:09,admin,admin,
1114,127912,6764,35287,6640,0,N,N,N,CP_Drtn,TT_Task,DT_FixedDrtn,TK_NotStart,HHI.1680,Weld Wind Girder,,450,0,20,0,576.000003,576.000003,20,85.333334,0,85.333334,,,,2014-10-06 16:00,2014-10-08 16:00,,2014-08-14 11:00,2014-08-16 16:00,2014-08-14 11:00,2014-08-16 16:00,2014-08-14 11:00,2014-08-16 16:00,2014-10-06 16:00,2014-10-08 16:00,,PT_Normal,,,,,KjOBGbboQGqg+xqoWxoGuQ,lf2z5A+bTU6uGcuoNA32QA,,,N,0,0,,,2014-02-17 15:27,2014-03-01 17:09,admin,admin,
1115,127913,6764,35287,6640,0,N,N,N,CP_Drtn,TT_Task,DT_FixedDrtn,TK_NotStart,HHI.1681,Quailty Check(Visual Inspection & PT),,450,0,30,0,0,0,30,0,0,0,,,,2014-10-02 16:00,2014-10-08 16:00,,2014-08-13 11:00,2014-08-16 16:00,2014-08-13 11:00,2014-08-16 16:00,2014-08-13 11:00,2014-08-16 16:00,2014-10-02 16:00,2014-10-08 16:00,,PT_Normal,,,,,VEK6VS2jS6uM1qe58MkaVw,35yx49RN+UOclERmOzxBuA,,,N,0,0,,,2014-02-17 15:27,2014-03-01 17:09,admin,admin,
1116,127914,6764,35289,6640,0,N,N,N,CP_Drtn,TT_Task,DT_FixedDrtn,TK_NotStart,HHI.1632,Erect & Tack Columns,,520,70,20,0,1680,1680,20,48,0,48,,,,2014-08-31 16:00,2014-09-02 16:00,,2014-06-21 07:00,2014-06-22 17:00,2014-06-21 07:00,2014-06-22 17:00,2014-06-21 07:00,2014-06-22 17:00,2014-08-31 16:00,2014-09-02 16:00,,PT_Normal,,,,,2R2sq0jpRQiIAiiXKabyeA,oeHEWELIwUK+3TOApE6zkA,,,N,0,0,,,2014-02-17 15:27,2014-03-01 17:09,admin,admin,
1117,127915,6764,35290,6640,0,N,N,N,CP_Drtn,TT_Task,DT_FixedDrtn,TK_NotStart,HHI.1631,Erect & Tack Columns,,450,0,20,0,1680,1680,20,48,0,48,,,,2014-08-21 16:00,2014-08-24 11:00,,2014-06-18 07:00,2014-06-19 17:00,2014-06-18 07:00,2014-06-19 17:00,2014-06-18 07:00,2014-06-19 17:00,2014-08-21 16:00,2014-08-24 11:00,,PT_Normal,,,,,H0PTPoqTRx2hAVTNlNThZA,PktqssTQj0extatsYw3dWA,,,N,0,0,,,2014-02-17 15:27,2014-03-01 17:09,admin,admin,
1118,127916,6764,35292,6640,0,N,N,N,CP_Drtn,TT_Task,DT_FixedDrtn,TK_NotStart,HHI.1723,"""""Fit & Tack 
Shell Course # 8 & Compression Ring",,450,0,20,0,255.999999,255.999999,20,8.533333,0,8.533333,,,,2014-11-18 16:00,2014-11-20 16:00,,2014-09-24 16:00,2014-09-27 16:00,2014-09-24 16:00,2014-09-27 16:00,2014-09-24 16:00,2014-09-27 16:00,2014-11-18 16:00,2014-11-20 16:00,,PT_Normal,,,,,3plDnfraQY+B152YA4yg4w,gDeSWU6rEESeRwdwLeYLcA,,,N,0,0,,,2014-02-17 15:27,2014-03-01 17:09,admin,admin,
1119,127917,6764,35292,6640,0,N,N,N,CP_Drtn,TT_Task,DT_FixedDrtn,TK_NotStart,HHI.1724,Weld Outer Horizontal Seam between Shell Course # 8 & Top Curb Angle,,460,0,10,0,128,128,10,33.066667,0,33.066667,,,,2014-11-22 16:00,2014-11-23 16:00,,2014-09-27 16:00,2014-09-28 16:00,2014-09-27 16:00,2014-09-28 16:00,2014-09-27 16:00,2014-09-28 16:00,2014-11-22 16:00,2014-11-23 16:00,,PT_Normal,,,,,DVLDnAwRQ+mgjLV6WdL7jg,8KHAwqn5ZkOP0uEgLWrDEw,,,N,0,0,,,2014-02-17 15:27,2014-03-01 17:09,admin,admin,
1120,127918,6764,35292,6640,0,N,N,N,CP_Drtn,TT_Task,DT_FixedDrtn,TK_NotStart,HHI.1725,"""""Backgouge & NDT Inside Horizontal Seam between Shell Course# 8 & Top Curb Angle",,460,10,10,0,90,90,10,33.066667,0,33.066667,,,,2014-11-22 16:00,2014-11-23 16:00,,2014-09-27 16:00,2014-09-28 16:00,2014-09-27 16:00,2014-09-28 16:00,2014-09-27 16:00,2014-09-28 16:00,2014-11-22 16:00,2014-11-23 16:00,,PT_Normal,,,,,h1s/NnDuTKiTXrpzqAVFOw,sw/0zt6LSkKuzIJCNSufKg,,,N,0,0,,,2014-02-17 15:27,2014-03-01 17:09,admin,admin,
1121,127919,6764,35292,6640,0,N,N,N,CP_Drtn,TT_Task,DT_FixedDrtn,TK_NotStart,HHI.1727,Weld Inner Horizontal Seam between Shell Course #8 & Top Curb Angle,,450,0,10,0,191.333334,191.333334,10,33.066667,0,33.066667,,,,2014-11-23 16:00,2014-11-24 16:00,,2014-09-29 16:00,2014-09-30 16:00,2014-09-29 16:00,2014-09-30 16:00,2014-09-29 16:00,2014-09-30 16:00,2014-11-23 16:00,2014-11-24 16:00,,PT_Normal,,,,,si9aDvn+RVGjF4F+LhUgtg,Jam579LsakOj50bSIyKnBA,,,N,0,0,,,2014-02-17 15:27,2014-03-01 17:09,admin,admin,
1122,127920,6764,35292,6640,0,N,N,N,CP_Drtn,TT_Task,DT_FixedDrtn,TK_NotStart,HHI.1729,Quailty Check (Visual Inspection),,450,0,50,0,42.666664,42.666664,50,42.666667,0,42.666667,,,,2014-11-18 16:00,2014-11-24 16:00,,2014-09-24 16:00,2014-09-30 16:00,2014-09-24 16:00,2014-09-30 16:00,2014-09-24 16:00,2014-09-30 16:00,2014-11-18 16:00,2014-11-24 16:00,,PT_Normal,,,,,zsDKOHa9RPqJTqY+bqsqeQ,a3Ar96sexECjudDPNLYhgw,,,N,0,0,,,2014-02-17 15:27,2014-03-01 17:09,admin,admin,
1123,127921,6764,35292,6640,0,N,N,N,CP_Drtn,TT_Task,DT_FixedDrtn,TK_NotStart,HHI.1726,"Fit up,Tack of Gusset Plates to Shell",,450,0,20,0,341.333337,341.333337,20,17.066667,0,17.066667,,,,2014-11-20 16:00,2014-11-23 16:00,,2014-09-27 16:00,2014-09-29 16:00,2014-09-27 16:00,2014-09-29 16:00,2014-09-27 16:00,2014-09-29 16:00,2014-11-20 16:00,2014-11-23 16:00,,PT_Normal,,,,,oIY2lOolTZWWE7rWMnXNpg,dosjCv3TtUuIFE1K6wDAjw,,,N,0,0,,,2014-02-17 15:27,2014-03-01 17:09,admin,admin,
1124,127922,6764,35292,6640,0,N,N,N,CP_Drtn,TT_Task,DT_FixedDrtn,TK_NotStart,HHI.1728,Welding of Gusset Plates,,450,0,10,0,202.666668,202.666668,10,85.333333,0,85.333333,,,,2014-11-23 16:00,2014-11-24 16:00,,2014-09-29 16:00,2014-09-30 16:00,2014-09-29 16:00,2014-09-30 16:00,2014-09-29 16:00,2014-09-30 16:00,2014-11-23 16:00,2014-11-24 16:00,,PT_Normal,,,,,H00mmtxnRO++/4SuCESndQ,J9bw8rj8EEy+ooPlfnXrOg,,,N,0,0,,,2014-02-17 15:27,2014-03-01 17:09,admin,admin,
1125,127923,6764,35293,6640,0,N,N,N,CP_Drtn,TT_Task,DT_FixedDrtn,TK_NotStart,HHI.1730,"Erect,Laydown & install Girders to Columns (1 Layers ,5 Girders)",,450,0,20,0,341.333331,341.333331,20,17.066666,0,17.066666,,,,2014-11-20 16:00,2014-11-23 16:00,,2014-09-27 16:00,2014-09-29 16:00,2014-09-27 16:00,2014-09-29 16:00,2014-09-27 16:00,2014-09-29 16:00,2014-11-20 16:00,2014-11-23 16:00,,PT_Normal,,,,,MeYYmMEkTceHxxXICTZhhQ,QEdKlRxv0UCAc/83OF8IOA,,,N,0,0,,,2014-02-17 15:27,2014-03-01 17:09,admin,admin,
1126,127924,6764,35294,6640,0,N,N,N,CP_Drtn,TT_Task,DT_FixedDrtn,TK_NotStart,HHI.1731,"Erect,Lay Down & Install the Rafters (75 Rafters)/ Install Internal Piping Brackets/Piping",,450,0,50,0,1343.999994,1343.999994,50,17.066666,0,17.066666,,,,2014-11-22 16:00,2014-11-27 16:00,,2014-09-28 16:00,2014-10-06 16:00,2014-09-28 16:00,2014-10-06 16:00,2014-09-28 16:00,2014-10-06 16:00,2014-11-22 16:00,2014-11-27 16:00,,PT_Normal,,,,,U9+Fxj9fRL+8+TRqthIaZA,wd4pbSlYa0WVP9A9MnGTnw,,,N,0,0,,,2014-02-17 15:27,2014-03-01 17:09,admin,admin,
1127,127925,6764,35295,6640,0,N,N,N,CP_Drtn,TT_Task,DT_FixedDrtn,TK_NotStart,HHI.1732,Prepare/Lay Down Roof Plates (27 Plates),,450,0,20,0,864.000004,864.000004,20,17.066667,0,17.066667,,,,2014-11-25 16:00,2014-11-27 16:00,,2014-10-01 16:00,2014-10-06 16:00,2014-10-01 16:00,2014-10-06 16:00,2014-10-01 16:00,2014-10-06 16:00,2014-11-25 16:00,2014-11-27 16:00,,PT_Normal,,,,,my55abryR9SwFOEziq1puw,WEAVgSmcPU+UDoTiD64E6g,,,N,0,0,,,2014-02-17 15:27,2014-03-01 17:09,admin,admin,
1128,127926,6764,35295,6640,0,N,N,N,CP_Drtn,TT_Task,DT_FixedDrtn,TK_NotStart,HHI.1733,Tacking of Roof Plates,,450,0,20,0,968,968,20,0,0,0,,,,2014-11-25 16:00,2014-11-27 16:00,,2014-10-01 16:00,2014-10-06 16:00,2014-10-01 16:00,2014-10-06 16:00,2014-10-01 16:00,2014-10-06 16:00,2014-11-25 16:00,2014-11-27 16:00,,PT_Normal,,,,,FLi3yaLFR3SJhR0m/xs4BA,IeMu53kIWEadFj7/lLXSxg,,,N,0,0,,,2014-02-17 15:27,2014-03-01 17:09,admin,admin,
1129,127927,6764,35295,6640,0,N,N,N,CP_Drtn,TT_Task,DT_FixedDrtn,TK_NotStart,HHI.1734,Welding of Roof Plates (Short Seams),,450,0,20,0,544,544,20,128,0,128,,,,2014-11-27 16:00,2014-11-30 16:00,,2014-10-06 16:00,2014-10-08 16:00,2014-10-06 16:00,2014-10-08 16:00,2014-10-06 16:00,2014-10-08 16:00,2014-11-27 16:00,2014-11-30 16:00,,PT_Normal,,,,,1rOWLalgRpqD3QVqAYcmZA,XyBEL/HnhkqwZToraJ6FOQ,,,N,0,0,,,2014-02-17 15:27,2014-03-01 17:09,admin,admin,
1130,127928,6764,35295,6640,0,N,N,N,CP_Drtn,TT_Task,DT_FixedDrtn,TK_NotStart,HHI.1736,Welding of Roof Plates (Long Seams),,450,0,30,0,1728.000001,1728.000001,30,249.6,0,249.6,,,,2014-11-30 16:00,2014-12-03 16:00,,2014-10-08 16:00,2014-10-12 16:00,2014-10-08 16:00,2014-10-12 16:00,2014-10-08 16:00,2014-10-12 16:00,2014-11-30 16:00,2014-12-03 16:00,,PT_Normal,,,,,rnf/LH84Rx6+A9XgG+PrQw,LrpNGWkhZEuHha+lukeIJw,,,N,0,0,,,2014-02-17 15:27,2014-03-01 17:09,admin,admin,
1131,127929,6764,35295,6640,0,N,N,N,CP_Drtn,TT_Task,DT_FixedDrtn,TK_NotStart,HHI.1735,Tack of Roof Plates to Curb Angle,,490,40,10,0,416,416,10,0,0,0,,,,2014-12-02 16:00,2014-12-03 16:00,,2014-10-06 16:00,2014-10-07 16:00,2014-10-06 16:00,2014-10-07 16:00,2014-10-06 16:00,2014-10-07 16:00,2014-12-02 16:00,2014-12-03 16:00,,PT_Normal,,,,,tEwXHM81QUGDsaBh8QiZXw,14+p0WL2sU2qBY4zZST8+Q,,,N,0,0,,,2014-02-17 15:27,2014-03-01 17:09,admin,admin,
1132,127930,6764,35295,6640,0,N,N,N,CP_Drtn,TT_Task,DT_FixedDrtn,TK_NotStart,HHI.1737,Welding of Roof Plates to Compression Ring,,450,0,20,0,608.000003,608.000003,20,85.333333,0,85.333333,,,,2014-12-03 16:00,2014-12-06 16:00,,2014-10-12 16:00,2014-10-14 16:00,2014-10-12 16:00,2014-10-14 16:00,2014-10-12 16:00,2014-10-14 16:00,2014-12-03 16:00,2014-12-06 16:00,,PT_Normal,,,,,8Bp8XEuCRI+ymKXfg/2y0g,rIR+OMZt30yK7WDWr4d6jw,,,N,0,0,,,2014-02-17 15:27,2014-03-01 17:09,admin,admin,
1133,127931,6764,35295,6640,0,N,N,N,CP_Drtn,TT_Task,DT_FixedDrtn,TK_NotStart,HHI.1740,"Quailty Check (Visual Inspection& Vaccum Box Test,PT,Air Leak Test for Roof Manholes& Nozzles))",,450,0,110,0,27.111111,27.111111,110,33.066667,0,33.066667,,,,2014-11-25 16:00,2014-12-08 16:00,,2014-10-01 16:00,2014-10-16 16:00,2014-10-01 16:00,2014-10-16 16:00,2014-10-01 16:00,2014-10-16 16:00,2014-11-25 16:00,2014-12-08 16:00,,PT_Normal,,,,,OjIhBE4YR3mQiNca9Bz0Aw,a81iPMKvKkmH4FLvsESdJw,,,N,0,0,,,2014-02-17 15:27,2014-03-01 17:09,admin,admin,
1134,127932,6764,35295,6640,0,N,N,N,CP_Drtn,TT_Task,DT_FixedDrtn,TK_NotStart,HHI.1738,"Fit,Weld Manholes ,Nozzles & install Top Platform Supports on Roof",,450,0,20,0,0,0,20,0,0,0,,,,2014-12-06 16:00,2014-12-08 16:00,,2014-10-14 16:00,2014-10-16 16:00,2014-10-14 16:00,2014-10-16 16:00,2014-10-14 16:00,2014-10-16 16:00,2014-12-06 16:00,2014-12-08 16:00,,PT_Normal,,,,,LmfPfrDsR3ybSv/z1wH/ww,eb0/4UO4X0OE/OedJtmMfg,,,N,0,0,,,2014-02-17 15:27,2014-03-01 17:09,admin,admin,
1135,127933,6764,35295,6640,0,N,N,N,CP_Drtn,TT_Task,DT_FixedDrtn,TK_NotStart,HHI.1739,Weld Internal Piping to Nozzle N1,,450,0,10,0,0,0,10,0,0,0,,,,2014-12-07 16:00,2014-12-08 16:00,,2014-10-15 16:00,2014-10-16 16:00,2014-10-15 16:00,2014-10-16 16:00,2014-10-15 16:00,2014-10-16 16:00,2014-12-07 16:00,2014-12-08 16:00,,PT_Normal,,,,,OwDD7yN1QzaRRv2KKPH2Zg,Dg6RN2dO10WebbSD/Xp5Dw,,,N,0,0,,,2014-02-17 15:27,2014-03-01 17:09,admin,admin,
1136,127934,6764,35296,6640,0,N,N,N,CP_Drtn,TT_Task,DT_FixedDrtn,TK_NotStart,HHI.1741,Erect & Install Stairways & Platforms for Shell,,450,0,20,0,341.333337,341.333337,20,17.066667,0,17.066667,,,,2014-12-08 16:00,2014-12-10 16:00,,2014-10-16 16:00,2014-10-19 16:00,2014-10-16 16:00,2014-10-19 16:00,2014-10-16 16:00,2014-10-19 16:00,2014-12-08 16:00,2014-12-10 16:00,,PT_Normal,,,,,UsV3V41iRmSYofLkb3FJ+A,iQlsdTrJGECFP59cM/M7rA,,,N,0,0,,,2014-02-17 15:27,2014-03-01 17:09,admin,admin,
1137,127935,6764,35296,6640,0,N,N,N,CP_Drtn,TT_Task,DT_FixedDrtn,TK_NotStart,HHI.1742,Erect & Install Stairways & Platforms & Handrails for Roof,,450,0,20,0,341.333337,341.333337,20,17.066667,0,17.066667,,,,2014-12-10 16:00,2014-12-13 16:00,,2014-10-19 16:00,2014-10-21 16:00,2014-10-19 16:00,2014-10-21 16:00,2014-10-19 16:00,2014-10-21 16:00,2014-12-10 16:00,2014-12-13 16:00,,PT_Normal,,,,,SBaAsFVGS4Gy4euhqGg02A,jhX3jTHTgkevosvPvXUAAg,,,N,0,0,,,2014-02-17 15:27,2014-03-01 17:09,admin,admin,
1138,127936,6764,35296,6640,0,N,N,N,CP_Drtn,TT_Task,DT_FixedDrtn,TK_NotStart,HHI.1743,Quality Check,,450,0,10,0,0,0,10,0,0,0,,,,2014-12-13 16:00,2014-12-14 16:00,,2014-10-21 16:00,2014-10-22 16:00,2014-10-21 16:00,2014-10-22 16:00,2014-10-21 16:00,2014-10-22 16:00,2014-12-13 16:00,2014-12-14 16:00,,PT_Normal,,,,,Ics4CvhkQbeHvbFnEvQdzw,tvy5eYDdNkycBQYRrDH7nA,,,N,0,0,,,2014-02-17 15:27,2014-03-01 17:09,admin,admin,
1139,127937,6764,35298,6640,0,N,N,N,CP_Drtn,TT_Task,DT_FixedDrtn,TK_NotStart,HHI.1642,Erect & Tack Wind Girder,,450,0,10,0,276.888892,276.888892,10,11.377778,0,11.377778,,,,2014-08-31 16:00,2014-09-01 16:00,,2014-06-29 13:00,2014-07-01 11:00,2014-06-29 13:00,2014-07-01 11:00,2014-06-29 13:00,2014-07-01 11:00,2014-08-31 16:00,2014-09-01 16:00,,PT_Normal,,,,,ZIxhib4+QICkgFMFH+bUCg,ppmolOMPJ0arFSWOErZ7ig,,,N,0,0,,,2014-02-17 15:27,2014-03-01 17:09,admin,admin,
1140,127938,6764,35298,6640,0,N,N,N,CP_Drtn,TT_Task,DT_FixedDrtn,TK_NotStart,HHI.1643,Weld Wind Girder,,450,0,10,0,608.000004,608.000004,10,85.333333,0,85.333333,,,,2014-09-01 16:00,2014-09-02 16:00,,2014-07-01 11:00,2014-07-02 15:00,2014-07-01 11:00,2014-07-02 15:00,2014-07-01 11:00,2014-07-02 15:00,2014-09-01 16:00,2014-09-02 16:00,,PT_Normal,,,,,IDHfB/nlRpetCJN5wR8gsg,JhRzsSVYbk6W0fh18zQ57g,,,N,0,0,,,2014-02-17 15:27,2014-03-01 17:09,admin,admin,
1141,127939,6764,35298,6640,0,N,N,N,CP_Drtn,TT_Task,DT_FixedDrtn,TK_NotStart,HHI.1644,Quailty Check(Visual Inspection & PT),,450,0,20,0,0,0,20,0,0,0,,,,2014-08-31 16:00,2014-09-02 16:00,,2014-06-29 13:00,2014-07-02 15:00,2014-06-29 13:00,2014-07-02 15:00,2014-06-29 13:00,2014-07-02 15:00,2014-08-31 16:00,2014-09-02 16:00,,PT_Normal,,,,,d7jD0EuxQ8y/Kuwq4Hw0SQ,uYD3Yxl8NkS94Na1Bgy3fA,,,N,0,0,,,2014-02-17 15:27,2014-03-01 17:09,admin,admin,
1142,127940,6764,35299,6640,0,N,N,N,CP_Drtn,TT_Task,DT_FixedDrtn,TK_NotStart,HHI.1654,Erect & Tack Wind Girder,,450,0,10,0,276.888892,276.888892,10,11.377778,0,11.377778,,,,2014-09-10 11:00,2014-09-11 11:00,,2014-07-16 13:00,2014-07-19 11:00,2014-07-16 13:00,2014-07-19 11:00,2014-07-16 13:00,2014-07-19 11:00,2014-09-10 11:00,2014-09-11 11:00,,PT_Normal,,,,,RjicfSAMS2qRfwzEY8LYrA,z4VOO5JblE2DKRx7Y0A6wQ,,,N,0,0,,,2014-02-17 15:27,2014-03-01 17:09,admin,admin,
1143,127941,6764,35299,6640,0,N,N,N,CP_Drtn,TT_Task,DT_FixedDrtn,TK_NotStart,HHI.1655,Weld Wind Girder,,450,0,10,0,608.000004,608.000004,10,85.333333,0,85.333333,,,,2014-09-11 11:00,2014-09-12 13:30,,2014-07-19 11:00,2014-07-20 15:00,2014-07-19 11:00,2014-07-20 15:00,2014-07-19 11:00,2014-07-20 15:00,2014-09-11 11:00,2014-09-12 13:30,,PT_Normal,,,,,dmfhNL6GTMygMnlYs3LygQ,j7sjrND8+kOLbNmf0mDA4Q,,,N,0,0,,,2014-02-17 15:27,2014-03-01 17:09,admin,admin,
1144,127942,6764,35299,6640,0,N,N,N,CP_Drtn,TT_Task,DT_FixedDrtn,TK_NotStart,HHI.1656,Quailty Check(Visual Inspection & PT),,450,0,20,0,0,0,20,0,0,0,,,,2014-09-10 11:00,2014-09-12 13:30,,2014-07-16 13:00,2014-07-20 15:00,2014-07-16 13:00,2014-07-20 15:00,2014-07-16 13:00,2014-07-20 15:00,2014-09-10 11:00,2014-09-12 13:30,,PT_Normal,,,,,B6Aqn2rmQQyT2D/BIV/iWA,PhEmXEUenk2y8ZZBsDP16Q,,,N,0,0,,,2014-02-17 15:27,2014-03-01 17:09,admin,admin,
1145,127943,6764,35300,6640,0,N,N,N,CP_Drtn,TT_Task,DT_FixedDrtn,TK_NotStart,HHI.1633,Erect & Tack Shell Course # 6 & Instal Stagging Brackets,,450,0,10,0,400,400,10,48,0,48,,,,2014-08-24 11:00,2014-08-25 11:00,,2014-06-21 07:00,2014-06-21 17:00,2014-06-21 07:00,2014-06-21 17:00,2014-06-21 07:00,2014-06-21 17:00,2014-08-24 11:00,2014-08-25 11:00,,PT_Normal,,,,,TJlmyW+5S0qWFJPc07nOrw,Jycex8EkpEa+2DFfqB9NHQ,,,N,0,0,,,2014-02-17 15:27,2014-03-01 17:09,admin,admin,
1146,127944,6764,35300,6640,0,N,N,N,CP_Drtn,TT_Task,DT_FixedDrtn,TK_NotStart,HHI.1634,Weld Outer Vertical Seam/Install the Stairways support on Shell,,450,0,10,0,181.333332,181.333332,10,42.666666,0,42.666666,,,,2014-08-25 11:00,2014-08-26 11:00,,2014-06-22 07:00,2014-06-22 17:00,2014-06-22 07:00,2014-06-22 17:00,2014-06-22 07:00,2014-06-22 17:00,2014-08-25 11:00,2014-08-26 11:00,,PT_Normal,,,,,sErZKoo2SVeDMhcRv5hP/g,YAAoRPBWpUCZ6d4q0ftFlA,,,N,0,0,,,2014-02-17 15:27,2014-03-01 17:09,admin,admin,
1147,127945,6764,35300,6640,0,N,N,N,CP_Drtn,TT_Task,DT_FixedDrtn,TK_NotStart,HHI.1635,Backgouge & NDT Inside Vertical Seam,,450,0,10,0,101.333332,101.333332,10,42.666666,0,42.666666,,,,2014-08-26 11:00,2014-08-27 11:00,,2014-06-23 07:00,2014-06-23 17:00,2014-06-23 07:00,2014-06-23 17:00,2014-06-23 07:00,2014-06-23 17:00,2014-08-26 11:00,2014-08-27 11:00,,PT_Normal,,,,,GqMa6E2JQ2GMY44t9QyIUA,E7QDphM6UkGAEz1uR1g4UA,,,N,0,0,,,2014-02-17 15:27,2014-03-01 17:09,admin,admin,
1148,127946,6764,35300,6640,0,N,N,N,CP_Drtn,TT_Task,DT_FixedDrtn,TK_NotStart,HHI.1636,Weld Inside Vertical Seam,,450,0,10,0,191.999998,191.999998,10,42.666666,0,42.666666,,,,2014-08-27 11:00,2014-08-28 11:00,,2014-06-24 07:00,2014-06-24 17:00,2014-06-24 07:00,2014-06-24 17:00,2014-06-24 07:00,2014-06-24 17:00,2014-08-27 11:00,2014-08-28 11:00,,PT_Normal,,,,,w+1VtNfAQSm2kr7DY8hslA,DumbRP5mh0aaZMtWsA89kA,,,N,0,0,,,2014-02-17 15:27,2014-03-01 17:09,admin,admin,
1149,127947,6764,35300,6640,0,N,N,N,CP_Drtn,TT_Task,DT_FixedDrtn,TK_NotStart,HHI.1637,"""""Weld Outer Horizontal Seam between Shell Course # 5 & 6""""",,450,0,10,0,405.333336,405.333336,10,85.333333,0,85.333333,,,,2014-08-28 11:00,2014-08-29 13:30,,2014-06-25 07:00,2014-06-25 17:00,2014-06-25 07:00,2014-06-25 17:00,2014-06-25 07:00,2014-06-25 17:00,2014-08-28 11:00,2014-08-29 13:30,,PT_Normal,,,,,1xAkGC0/RViwK5ELl3ElIw,dM7b5fkIfkGbv6zypDNCeg,,,N,0,0,,,2014-02-17 15:27,2014-03-01 17:09,admin,admin,
1150,127948,6764,35300,6640,0,N,N,N,CP_Drtn,TT_Task,DT_FixedDrtn,TK_NotStart,HHI.1638,"""""Backgouge & NDT Inside Horizontal Seam between Shell Course# 5 & 6""""",,450,0,10,0,108.444444,108.444444,10,33.066667,0,33.066667,,,,2014-08-29 13:30,2014-08-30 16:00,,2014-06-26 07:00,2014-06-26 17:00,2014-06-26 07:00,2014-06-26 17:00,2014-06-26 07:00,2014-06-26 17:00,2014-08-29 13:30,2014-08-30 16:00,,PT_Normal,,,,,Td9xBOaUQ/2h5NMZw4p9rA,cKRrtDSwFE67RjGDgm7KPw,,,N,0,0,,,2014-02-17 15:27,2014-03-01 17:09,admin,admin,
1151,127949,6764,35300,6640,0,N,N,N,CP_Drtn,TT_Task,DT_FixedDrtn,TK_NotStart,HHI.1639,"Weld Inner Horizontal Seam between Shell Course # 5 & 6""""",,450,0,10,0,202.666668,202.666668,10,85.333333,0,85.333333,,,,2014-08-30 16:00,2014-08-31 16:00,,2014-06-28 09:00,2014-06-29 13:00,2014-06-28 09:00,2014-06-29 13:00,2014-06-28 09:00,2014-06-29 13:00,2014-08-30 16:00,2014-08-31 16:00,,PT_Normal,,,,,Tqs+3sTgTwq3nfdwBWJXWw,MRz+cPrhdkGq+OmtcxAh+w,,,N,0,0,,,2014-02-17 15:27,2014-03-01 17:09,admin,admin,
1152,127950,6764,35300,6640,0,N,N,N,CP_Drtn,TT_Task,DT_FixedDrtn,TK_NotStart,HHI.1641,"Quailty Check(Visual Inspection,PT,Air Leak Test for Shell Nozzle)",,450,0,60,0,34.222222,34.222222,60,33.066667,0,33.066667,,,,2014-08-25 11:00,2014-08-31 16:00,,2014-06-22 07:00,2014-06-29 13:00,2014-06-22 07:00,2014-06-29 13:00,2014-06-22 07:00,2014-06-29 13:00,2014-08-25 11:00,2014-08-31 16:00,,PT_Normal,,,,,8TwC5T4CT3uTY9nR9jLKVA,Sw9o81O+q0meLlDSPogAqA,,,N,0,0,,,2014-02-17 15:27,2014-03-01 17:09,admin,admin,
1153,127951,6764,35300,6640,0,N,N,N,CP_Drtn,TT_Task,DT_FixedDrtn,TK_NotStart,HHI.1640,"Fit,Weld Nozzle on Shell",,450,0,10,0,0,0,10,0,0,0,,,,2014-08-30 16:00,2014-08-31 16:00,,2014-06-28 09:00,2014-06-29 13:00,2014-06-28 09:00,2014-06-29 13:00,2014-06-28 09:00,2014-06-29 13:00,2014-08-30 16:00,2014-08-31 16:00,,PT_Normal,,,,,q4dvY6hFTS+P2MwDYpZaQw,fbldQ+V3kkeOO57Zn+YcKg,,,N,0,0,,,2014-02-17 15:27,2014-03-01 17:09,admin,admin,
1154,127952,6764,35301,6640,0,N,N,N,CP_Drtn,TT_Task,DT_FixedDrtn,TK_NotStart,HHI.1645,Erect & Tack Shell Course # 6 & Install Stagging Brackets,,450,0,10,0,380,380,10,48,0,48,,,,2014-09-02 16:00,2014-09-03 16:00,,2014-07-03 09:00,2014-07-05 13:00,2014-07-03 09:00,2014-07-05 13:00,2014-07-03 09:00,2014-07-05 13:00,2014-09-02 16:00,2014-09-03 16:00,,PT_Normal,,,,,Y5aP8DZ1Tt+VklFo/N6eIw,doUl0GNQbkubHm8J3bcBnw,,,N,0,0,,,2014-02-17 15:27,2014-03-01 17:09,admin,admin,
1155,127953,6764,35301,6640,0,N,N,N,CP_Drtn,TT_Task,DT_FixedDrtn,TK_NotStart,HHI.1646,Weld Outer Vertical Seam/Install the Stairways support on Shell,,450,0,10,0,160,160,10,42.666666,0,42.666666,,,,2014-09-03 16:00,2014-09-04 16:00,,2014-07-05 13:00,2014-07-07 11:00,2014-07-05 13:00,2014-07-07 11:00,2014-07-05 13:00,2014-07-07 11:00,2014-09-03 16:00,2014-09-04 16:00,,PT_Normal,,,,,dPNLUNkVTHWSLFchn4/QMw,ssDxIBpK80CbnbeP7P0wfg,,,N,0,0,,,2014-02-17 15:27,2014-03-01 17:09,admin,admin,
1156,127954,6764,35301,6640,0,N,N,N,CP_Drtn,TT_Task,DT_FixedDrtn,TK_NotStart,HHI.1647,Backgouge & NDT Inside Vertical Seam,,450,0,10,0,101.333332,101.333332,10,42.666666,0,42.666666,,,,2014-09-04 16:00,2014-09-06 11:00,,2014-07-07 11:00,2014-07-08 15:00,2014-07-07 11:00,2014-07-08 15:00,2014-07-07 11:00,2014-07-08 15:00,2014-09-04 16:00,2014-09-06 11:00,,PT_Normal,,,,,e2l3JPysS9+1Y89yNo41gw,ErQvIHuYwUySJTKD4cWcug,,,N,0,0,,,2014-02-17 15:27,2014-03-01 17:09,admin,admin,
1157,127955,6764,35301,6640,0,N,N,N,CP_Drtn,TT_Task,DT_FixedDrtn,TK_NotStart,HHI.1648,Weld Inside Vertical Seam,,450,0,10,0,160,160,10,42.666666,0,42.666666,,,,2014-09-06 11:00,2014-09-07 11:00,,2014-07-09 09:00,2014-07-10 13:00,2014-07-09 09:00,2014-07-10 13:00,2014-07-09 09:00,2014-07-10 13:00,2014-09-06 11:00,2014-09-07 11:00,,PT_Normal,,,,,NA6/q0g+TmaQnbCGB+Jrog,ZL731rNOVkKdFO21k8xHBw,,,N,0,0,,,2014-02-17 15:27,2014-03-01 17:09,admin,admin,
1158,127956,6764,35301,6640,0,N,N,N,CP_Drtn,TT_Task,DT_FixedDrtn,TK_NotStart,HHI.1649,"""""Weld Outer Horizontal Seam between Shell Course # 5 & 6""""",,450,0,10,0,405.333336,405.333336,10,85.333333,0,85.333333,,,,2014-09-07 11:00,2014-09-08 11:00,,2014-07-10 13:00,2014-07-13 11:00,2014-07-10 13:00,2014-07-13 11:00,2014-07-10 13:00,2014-07-13 11:00,2014-09-07 11:00,2014-09-08 11:00,,PT_Normal,,,,,9/PH3QXJQdWm0Ro6uWvH7Q,T9n5Mwd11U2npvHurBZbSg,,,N,0,0,,,2014-02-17 15:27,2014-03-01 17:09,admin,admin,
1159,127957,6764,35301,6640,0,N,N,N,CP_Drtn,TT_Task,DT_FixedDrtn,TK_NotStart,HHI.1650,"""""Backgouge & NDT Inside Horizontal Seam between Shell Course# 5 & 6""""",,450,0,10,0,108.444444,108.444444,10,33.066667,0,33.066667,,,,2014-09-08 11:00,2014-09-09 11:00,,2014-07-13 11:00,2014-07-14 15:00,2014-07-13 11:00,2014-07-14 15:00,2014-07-13 11:00,2014-07-14 15:00,2014-09-08 11:00,2014-09-09 11:00,,PT_Normal,,,,,qiXsJLUPSDy7C3qu+xURgA,AtUcbUyXrkSvatzsyAyD1A,,,N,0,0,,,2014-02-17 15:27,2014-03-01 17:09,admin,admin,
1160,127958,6764,35301,6640,0,N,N,N,CP_Drtn,TT_Task,DT_FixedDrtn,TK_NotStart,HHI.1651,"Weld Inner Horizontal Seam between Shell Course # 5 & 6""""",,450,0,10,0,202.666668,202.666668,10,85.333333,0,85.333333,,,,2014-09-09 11:00,2014-09-10 11:00,,2014-07-15 09:00,2014-07-16 13:00,2014-07-15 09:00,2014-07-16 13:00,2014-07-15 09:00,2014-07-16 13:00,2014-09-09 11:00,2014-09-10 11:00,,PT_Normal,,,,,/ldWp5XITLK530s92g9DdQ,JqmRcxdYXESRrN9YPKXLQg,,,N,0,0,,,2014-02-17 15:27,2014-03-01 17:09,admin,admin,
1161,127959,6764,35301,6640,0,N,N,N,CP_Drtn,TT_Task,DT_FixedDrtn,TK_NotStart,HHI.1653,"Quailty Check(Visual Inspection,PT,Air Leak Test for Shell Nozzle)",,450,0,60,0,27.111111,27.111111,60,33.066667,0,33.066667,,,,2014-09-03 16:00,2014-09-10 11:00,,2014-07-05 13:00,2014-07-16 13:00,2014-07-05 13:00,2014-07-16 13:00,2014-07-05 13:00,2014-07-16 13:00,2014-09-03 16:00,2014-09-10 11:00,,PT_Normal,,,,,Da4AqUQZQJORSEQ9S7h0ew,mxOUvJ8kNECcPMKH2oFd/A,,,N,0,0,,,2014-02-17 15:27,2014-03-01 17:09,admin,admin,
1162,127960,6764,35301,6640,0,N,N,N,CP_Drtn,TT_Task,DT_FixedDrtn,TK_NotStart,HHI.1652,"Fit,Weld Nozzle on Shell",,450,0,10,0,0,0,10,0,0,0,,,,2014-09-09 11:00,2014-09-10 11:00,,2014-07-15 09:00,2014-07-16 13:00,2014-07-15 09:00,2014-07-16 13:00,2014-07-15 09:00,2014-07-16 13:00,2014-09-09 11:00,2014-09-10 11:00,,PT_Normal,,,,,SNPyiWo5T2KpDemy246dwg,fbldQ+V3kkeOO57Zn+YcKg,,,N,0,0,,,2014-02-17 15:27,2014-03-01 17:09,admin,admin,
1163,127961,6764,35302,6640,0,N,N,N,CP_Drtn,TT_Task,DT_FixedDrtn,TK_NotStart,HHI.1657,Perform RT for Tank#1 & #2,,450,0,10,0,0,0,10,0,0,0,,,,2014-09-12 13:30,2014-09-13 16:00,,2014-07-21 09:00,2014-07-22 13:00,2014-07-21 09:00,2014-07-22 13:00,2014-07-21 09:00,2014-07-22 13:00,2014-09-12 13:30,2014-09-13 16:00,,PT_Normal,,,,,7JMvObG2QdGTBJy1GByVUA,lIoEQjjNck+yoYvMymY4NQ,,,N,0,0,,,2014-02-17 15:27,2014-03-01 17:09,admin,admin,
1164,127962,6764,35304,6640,0,N,N,N,CP_Drtn,TT_Task,DT_FixedDrtn,TK_NotStart,HHI.1531,Erect & Tack Shell Course # 1 & Install Stagging Brackets,,450,0,20,0,420,420,20,48,0,48,,,,2014-05-19 07:00,2014-05-20 17:00,,2014-03-27 07:00,2014-03-29 17:00,2014-03-27 07:00,2014-03-29 17:00,2014-03-27 07:00,2014-03-29 17:00,2014-05-19 07:00,2014-05-20 17:00,,PT_Normal,,,,,sZ+WjywZTs2IooLb/m/KjA,0E/smloR6EyT2SOhcvF57Q,,,N,0,0,,,2014-02-17 15:27,2014-03-01 17:09,admin,admin,
1165,127963,6764,35304,6640,0,N,N,N,CP_Drtn,TT_Task,DT_FixedDrtn,TK_NotStart,HHI.1532,Weld Outer Vertical Seam/Install the Stairways support on Shell,,460,0,10,0,400,400,10,80,0,80,,,,2014-05-21 07:00,2014-05-21 17:00,,2014-03-29 07:00,2014-03-29 17:00,2014-03-29 07:00,2014-03-29 17:00,2014-03-29 07:00,2014-03-29 17:00,2014-05-21 07:00,2014-05-21 17:00,,PT_Normal,,,,,BkZoPMoOTkq6oKXEoPPWNA,aJkb3RmAXEeXRyyqLYEdvA,,,N,0,0,,,2014-02-17 15:27,2014-03-01 17:09,admin,admin,
1166,127964,6764,35304,6640,0,N,N,N,CP_Drtn,TT_Task,DT_FixedDrtn,TK_NotStart,HHI.1534,"Backgouge,Grinding & NDT Inside Vertical Seam",,460,0,10,0,90,90,10,33.066667,0,33.066667,,,,2014-05-22 07:00,2014-05-22 17:00,,2014-03-30 07:00,2014-03-30 17:00,2014-03-30 07:00,2014-03-30 17:00,2014-03-30 07:00,2014-03-30 17:00,2014-05-22 07:00,2014-05-22 17:00,,PT_Normal,,,,,qDQMh4nqRDq1PDQc/ZUCLQ,J4No13vZxk622wD3T0uT6Q,,,N,0,0,,,2014-02-17 15:27,2014-03-01 17:09,admin,admin,
1167,127965,6764,35304,6640,0,N,N,N,CP_Drtn,TT_Task,DT_FixedDrtn,TK_NotStart,HHI.1535,Weld Inside Vertical Seam,,460,0,10,0,181.333334,181.333334,10,85.333334,0,85.333334,,,,2014-05-24 07:00,2014-05-24 17:00,,2014-03-31 07:00,2014-03-31 17:00,2014-03-31 07:00,2014-03-31 17:00,2014-03-31 07:00,2014-03-31 17:00,2014-05-24 07:00,2014-05-24 17:00,,PT_Normal,,,,,vfbCU4qqRfWwRYhvxcAEOA,wO0P1Hehdk20v/UpV9+TIg,,,N,0,0,,,2014-02-17 15:27,2014-03-01 17:09,admin,admin,
1168,127966,6764,35304,6640,0,N,N,N,CP_Drtn,TT_Task,DT_FixedDrtn,TK_NotStart,HHI.1537,"Quailty Check(Visual Inspection & PT,Air Leak Test for Shell Manholes& Nozzles)",,450,0,60,0,27.111111,27.111111,60,33.066667,0,33.066667,,,,2014-05-19 07:00,2014-05-25 17:00,,2014-03-27 07:00,2014-04-02 17:00,2014-03-27 07:00,2014-04-02 17:00,2014-03-27 07:00,2014-04-02 17:00,2014-05-19 07:00,2014-05-25 17:00,,PT_Normal,,,,,FWX8A0YlS9u5nB9lUyV6gg,WJJ2iSFEsEuSUqXAtrlnIg,,,N,0,0,,,2014-02-17 15:27,2014-03-01 17:09,admin,admin,
1169,127967,6764,35304,6640,0,N,N,N,CP_Drtn,TT_Task,DT_FixedDrtn,TK_NotStart,HHI.1533,Fit up/Tack Shell #1 to Annular Plate,,460,0,10,0,0,0,10,0,0,0,,,,2014-05-21 07:00,2014-05-21 17:00,,2014-03-29 07:00,2014-03-29 17:00,2014-03-29 07:00,2014-03-29 17:00,2014-03-29 07:00,2014-03-29 17:00,2014-05-21 07:00,2014-05-21 17:00,,PT_Normal,,,,,hmdLtMFQSlKTw/QJgcNpTg,y5yDdgPwd0GTX/d0FOnSTQ,,,N,0,0,,,2014-02-17 15:27,2014-03-01 17:09,admin,admin,
1170,127968,6764,35304,6640,0,N,N,N,CP_Drtn,TT_Task,DT_FixedDrtn,TK_NotStart,HHI.1536,"Fit,Weld for Manhole ,Nozzles on Shell",,460,10,20,0,0,0,20,0,0,0,,,,2014-05-24 07:00,2014-05-25 17:00,,2014-03-31 07:00,2014-04-01 17:00,2014-03-31 07:00,2014-04-01 17:00,2014-03-31 07:00,2014-04-01 17:00,2014-05-24 07:00,2014-05-25 17:00,,PT_Normal,,,,,WIoK8Mr/Qc+rdtAbP6JmlA,x5bmk8X+HUOd5iaetJdSYA,,,N,0,0,,,2014-02-17 15:27,2014-03-01 17:09,admin,admin,
1171,127969,6764,35305,6640,0,N,N,N,CP_Drtn,TT_Task,DT_FixedDrtn,TK_NotStart,HHI.1545,Perform RT for Tank#1 & #2,,450,0,10,0,0,0,10,0,0,0,,,,2014-06-02 07:00,2014-06-02 17:00,,2014-04-10 07:00,2014-04-10 17:00,2014-04-10 07:00,2014-04-10 17:00,2014-04-10 07:00,2014-04-10 17:00,2014-06-02 07:00,2014-06-02 17:00,,PT_Normal,,,,,gXkLV43kSYyP3u3JdlcjBg,eAYPJ8I1Z0yjWdacaGbeFQ,,,N,0,0,,,2014-02-17 15:27,2014-03-01 17:09,admin,admin,
1172,127970,6764,35306,6640,0,N,N,N,CP_Drtn,TT_Task,DT_FixedDrtn,TK_NotStart,HHI.1538,Erect & Tack Shell Course # 1 &Install Stagging Brackets,,450,0,20,0,420,420,20,48,0,48,,,,2014-05-26 07:00,2014-05-27 17:00,,2014-04-03 07:00,2014-04-05 17:00,2014-04-03 07:00,2014-04-05 17:00,2014-04-03 07:00,2014-04-05 17:00,2014-05-26 07:00,2014-05-27 17:00,,PT_Normal,,,,,H5UOK3CgSAu2rfLIyiPz4A,QidDUs3blUyJ71Bxk49s+w,,,N,0,0,,,2014-02-17 15:27,2014-03-01 17:09,admin,admin,
1173,127971,6764,35306,6640,0,N,N,N,CP_Drtn,TT_Task,DT_FixedDrtn,TK_NotStart,HHI.1539,Weld Outer Vertical Seam/Install the Stairways support on Shell,,460,0,10,0,290.133334,290.133334,10,85.333334,0,85.333334,,,,2014-05-28 07:00,2014-05-28 17:00,,2014-04-05 07:00,2014-04-05 17:00,2014-04-05 07:00,2014-04-05 17:00,2014-04-05 07:00,2014-04-05 17:00,2014-05-28 07:00,2014-05-28 17:00,,PT_Normal,,,,,A2Paqt84QniOrbqiuD8KRA,o564OsHIX0+AMVbdjmMKgQ,,,N,0,0,,,2014-02-17 15:27,2014-03-01 17:09,admin,admin,
1174,127972,6764,35306,6640,0,N,N,N,CP_Drtn,TT_Task,DT_FixedDrtn,TK_NotStart,HHI.1541,"Backgouge,Grinding & NDT Inside Vertical Seam",,460,0,10,0,87.111111,87.111111,10,33.066667,0,33.066667,,,,2014-05-29 07:00,2014-05-29 17:00,,2014-04-06 07:00,2014-04-06 17:00,2014-04-06 07:00,2014-04-06 17:00,2014-04-06 07:00,2014-04-06 17:00,2014-05-29 07:00,2014-05-29 17:00,,PT_Normal,,,,,CI4q7IRURHCVzuJeLk63Yw,cWq9fSBI8kaBswm1houFMw,,,N,0,0,,,2014-02-17 15:27,2014-03-01 17:09,admin,admin,
1175,127973,6764,35306,6640,0,N,N,N,CP_Drtn,TT_Task,DT_FixedDrtn,TK_NotStart,HHI.1542,Weld Inside Vertical Seam,,460,0,10,0,192.000001,192.000001,10,85.333334,0,85.333334,,,,2014-05-31 07:00,2014-05-31 17:00,,2014-04-07 07:00,2014-04-07 17:00,2014-04-07 07:00,2014-04-07 17:00,2014-04-07 07:00,2014-04-07 17:00,2014-05-31 07:00,2014-05-31 17:00,,PT_Normal,,,,,0H7hCTUET16Hgjehn8aVsg,bW4nEjpq0E6hc+r9VeQzBg,,,N,0,0,,,2014-02-17 15:27,2014-03-01 17:09,admin,admin,
1176,127974,6764,35306,6640,0,N,N,N,CP_Drtn,TT_Task,DT_FixedDrtn,TK_NotStart,HHI.1544,"Quailty Check(Visual Inspection  PT,Air Leak Test for Shell Manholes& Nozzles)",,450,0,60,0,21.333333,21.333333,60,33.066667,0,33.066667,,,,2014-05-26 07:00,2014-06-01 17:00,,2014-04-03 07:00,2014-04-09 17:00,2014-04-03 07:00,2014-04-09 17:00,2014-04-03 07:00,2014-04-09 17:00,2014-05-26 07:00,2014-06-01 17:00,,PT_Normal,,,,,wRJY1So1TdyJK55uQ854UQ,BOEBHfbPK0CpKS6kK89j4g,,,N,0,0,,,2014-02-17 15:27,2014-03-01 17:09,admin,admin,
1177,127975,6764,35306,6640,0,N,N,N,CP_Drtn,TT_Task,DT_FixedDrtn,TK_NotStart,HHI.1540,Fit up/Tack Shell #1 to Annular Plate,,460,0,10,0,0,0,10,0,0,0,,,,2014-05-28 07:00,2014-05-28 17:00,,2014-04-05 07:00,2014-04-05 17:00,2014-04-05 07:00,2014-04-05 17:00,2014-04-05 07:00,2014-04-05 17:00,2014-05-28 07:00,2014-05-28 17:00,,PT_Normal,,,,,R4zT7d87T9KJrUwkt90eTA,ituuTPTo8UG3xMi+y4BowQ,,,N,0,0,,,2014-02-17 15:27,2014-03-01 17:09,admin,admin,
1178,127976,6764,35306,6640,0,N,N,N,CP_Drtn,TT_Task,DT_FixedDrtn,TK_NotStart,HHI.1543,"Fit,Weld for Manhole ,Nozzles on Shell",,460,10,20,0,0,0,20,0,0,0,,,,2014-05-31 07:00,2014-06-01 17:00,,2014-04-07 07:00,2014-04-08 17:00,2014-04-07 07:00,2014-04-08 17:00,2014-04-07 07:00,2014-04-08 17:00,2014-05-31 07:00,2014-06-01 17:00,,PT_Normal,,,,,AII8uWuEQoGv0huJm/kZ9g,AoB1e4W8J0qUx+7h4mImOA,,,N,0,0,,,2014-02-17 15:27,2014-03-01 17:09,admin,admin,
1179,127977,6764,35308,6640,0,N,N,N,CP_Drtn,TT_Task,DT_FixedDrtn,TK_NotStart,HHI.1519,"Install Sealent,Erect & Tack of Annular Plates",,450,0,10,0,80,80,10,8,0,8,,,,2014-05-04 07:00,2014-05-04 17:00,,2014-03-12 07:00,2014-03-12 17:00,2014-03-12 07:00,2014-03-12 17:00,2014-03-12 07:00,2014-03-12 17:00,2014-05-04 07:00,2014-05-04 17:00,,PT_Normal,,,,,YD+iyZeqSai44kUl3efZtA,d8Ea8JJjqkmhO1tziFG7Vw,,,N,0,0,,,2014-02-17 15:27,2014-03-01 17:09,admin,admin,
1180,127978,6764,35308,6640,0,N,N,N,CP_Drtn,TT_Task,DT_FixedDrtn,TK_NotStart,HHI.1520,Welding of Annular Plates,,450,0,10,0,180,180,10,40,0,40,,,,2014-05-05 07:00,2014-05-05 17:00,,2014-03-13 07:00,2014-03-13 17:00,2014-03-13 07:00,2014-03-13 17:00,2014-03-13 07:00,2014-03-13 17:00,2014-05-05 07:00,2014-05-05 17:00,,PT_Normal,,,,,2ROI1BvZRu+X9BBT6dwqQg,+AHxq0mrmkqRPcBaIbFqKA,,,N,0,0,,,2014-02-17 15:27,2014-03-01 17:09,admin,admin,
1181,127979,6764,35308,6640,0,N,N,N,CP_Drtn,TT_Task,DT_FixedDrtn,TK_NotStart,HHI.1521,"Quailty Check (Visual Inspection,PT & Vaccum Box Test)",,450,0,20,0,40,40,20,40,0,40,,,,2014-05-04 07:00,2014-05-05 17:00,,2014-03-12 07:00,2014-03-13 17:00,2014-03-12 07:00,2014-03-13 17:00,2014-03-12 07:00,2014-03-13 17:00,2014-05-04 07:00,2014-05-05 17:00,,PT_Normal,,,,,6pbTzjGNTEWkDpB/ArVvnw,crJRE4KFRkiNwceNzlp8gw,,,N,0,0,,,2014-02-17 15:27,2014-03-01 17:09,admin,admin,
1182,127980,6764,35309,6640,0,N,N,N,CP_Drtn,TT_Task,DT_FixedDrtn,TK_NotStart,HHI.1522,Perform RT for Tank#1 & #2,,450,0,10,0,0,0,10,0,0,0,,,,2014-05-06 07:00,2014-05-06 17:00,,2014-03-15 07:00,2014-03-15 17:00,2014-03-15 07:00,2014-03-15 17:00,2014-03-15 07:00,2014-03-15 17:00,2014-05-06 07:00,2014-05-06 17:00,,PT_Normal,,,,,MZuQHUmWQkSSOjjSZ0FBiQ,+KHZuapPOkmQ3dJiYxmsmg,,,N,0,0,,,2014-02-17 15:27,2014-03-01 17:09,admin,admin,
1183,127981,6764,35310,6640,0,N,N,N,CP_Drtn,TT_Task,DT_FixedDrtn,TK_NotStart,HHI.1523,Prepare & Lay Down Bottom Plates,,450,0,20,0,347.999998,347.999998,20,25.6,0,25.6,,,,2014-05-06 07:00,2014-05-07 17:00,,2014-03-15 07:00,2014-03-16 17:00,2014-03-15 07:00,2014-03-16 17:00,2014-03-15 07:00,2014-03-16 17:00,2014-05-06 07:00,2014-05-07 17:00,,PT_Normal,,,,,2C3NIriVRBqN/uoLnjdWtA,/JTGLzO4ck6pIN2LnRJjdw,,,N,0,0,,,2014-02-17 15:27,2014-03-01 17:09,admin,admin,
1184,127982,6764,35310,6640,0,N,N,N,CP_Drtn,TT_Task,DT_FixedDrtn,TK_NotStart,HHI.1530,Quailty Check (Visual Inspection& Vaccum Box Test),,450,0,110,0,21.333334,21.333334,110,42.666666,0,42.666666,,,,2014-05-06 07:00,2014-05-18 17:00,,2014-03-15 07:00,2014-03-26 17:00,2014-03-15 07:00,2014-03-26 17:00,2014-03-15 07:00,2014-03-26 17:00,2014-05-06 07:00,2014-05-18 17:00,,PT_Normal,,,,,yCG/Lpo4TC27ONUuuOg/Rw,tf6VrJu9oUWRAwE+Q5i7Kg,,,N,0,0,,,2014-02-17 15:27,2014-03-01 17:09,admin,admin,
1185,127983,6764,35310,6640,0,N,N,N,CP_Drtn,TT_Task,DT_FixedDrtn,TK_NotStart,HHI.1527,"Erect,Fitup of Sump",,470,20,10,0,51.999998,51.999998,10,42.666666,0,42.666666,,,,2014-05-17 07:00,2014-05-17 17:00,,2014-03-23 07:00,2014-03-23 17:00,2014-03-23 07:00,2014-03-23 17:00,2014-03-23 07:00,2014-03-23 17:00,2014-05-17 07:00,2014-05-17 17:00,,PT_Normal,,,,,2TdFQjt/S4WC3PPKkwhlKg,3sWa48Pmz0Gc4mL+5+Kkrw,,,N,0,0,,,2014-02-17 15:27,2014-03-01 17:09,admin,admin,
1186,127984,6764,35310,6640,0,N,N,N,CP_Drtn,TT_Task,DT_FixedDrtn,TK_NotStart,HHI.1529,Weld Sump,,450,0,10,0,17.066666,17.066666,10,42.666666,0,42.666666,,,,2014-05-18 07:00,2014-05-18 17:00,,2014-03-26 07:00,2014-03-26 17:00,2014-03-26 07:00,2014-03-26 17:00,2014-03-26 07:00,2014-03-26 17:00,2014-05-18 07:00,2014-05-18 17:00,,PT_Normal,,,,,CGjRazhSTCu+VeM85TVtGg,abKS8dJLVUKkmDMw9MUliw,,,N,0,0,,,2014-02-17 15:27,2014-03-01 17:09,admin,admin,
1187,127985,6764,35310,6640,0,N,N,N,CP_Drtn,TT_Task,DT_FixedDrtn,TK_NotStart,HHI.1524,Fit/Tack Bottom Plates-Short Seams,,450,0,20,0,0,0,20,0,0,0,,,,2014-05-10 07:00,2014-05-11 17:00,,2014-03-18 07:00,2014-03-19 17:00,2014-03-18 07:00,2014-03-19 17:00,2014-03-18 07:00,2014-03-19 17:00,2014-05-10 07:00,2014-05-11 17:00,,PT_Normal,,,,,eeaDWIgqRqqkZnexQeiWZg,amVirfkPC0urE2cTRnjCtQ,,,N,0,0,,,2014-02-17 15:27,2014-03-01 17:09,admin,admin,
1188,127986,6764,35310,6640,0,N,N,N,CP_Drtn,TT_Task,DT_FixedDrtn,TK_NotStart,HHI.1525,Weld Short Seams,,450,0,20,0,0,0,20,0,0,0,,,,2014-05-11 07:00,2014-05-12 17:00,,2014-03-19 07:00,2014-03-20 17:00,2014-03-19 07:00,2014-03-20 17:00,2014-03-19 07:00,2014-03-20 17:00,2014-05-11 07:00,2014-05-12 17:00,,PT_Normal,,,,,LmJDGx56S1WwaPTnOwEDPQ,BQJajxvdrkKJcLz3l2Kt1A,,,N,0,0,,,2014-02-17 15:27,2014-03-01 17:09,admin,admin,
1189,127987,6764,35310,6640,0,N,N,N,CP_Drtn,TT_Task,DT_FixedDrtn,TK_NotStart,HHI.1526,Fit/Tack Bottom Plates-Long Seams,,450,0,20,0,0,0,20,0,0,0,,,,2014-05-13 07:00,2014-05-14 17:00,,2014-03-22 07:00,2014-03-23 17:00,2014-03-22 07:00,2014-03-23 17:00,2014-03-22 07:00,2014-03-23 17:00,2014-05-13 07:00,2014-05-14 17:00,,PT_Normal,,,,,vZKtDA5FQhapDbBU/utRnA,A2a0Y44V4kupnfuY7qyaIg,,,N,0,0,,,2014-02-17 15:27,2014-03-01 17:09,admin,admin,
1190,127988,6764,35310,6640,0,N,N,N,CP_Drtn,TT_Task,DT_FixedDrtn,TK_NotStart,HHI.1528,Weld Long Seams,,450,0,40,0,0,0,40,0,0,0,,,,2014-05-14 07:00,2014-05-18 17:00,,2014-03-23 07:00,2014-03-26 17:00,2014-03-23 07:00,2014-03-26 17:00,2014-03-23 07:00,2014-03-26 17:00,2014-05-14 07:00,2014-05-18 17:00,,PT_Normal,,,,,v6REkfFzRiqEZEJD5wH0oA,Qu4gYMyqGkO9b5iWJo4qKQ,,,N,0,0,,,2014-02-17 15:27,2014-03-01 17:09,admin,admin,
1191,127989,6764,35312,6640,0,N,N,N,CP_Drtn,TT_Task,DT_FixedDrtn,TK_NotStart,HHI.1744,Mechanical Completion (MCC) & Final Isnpection Before Hydrotesting,,660,0,10,0,16,16,10,40,0,40,,,,2014-12-13 16:00,2014-12-14 16:00,,2014-09-24 16:00,2014-09-25 16:00,2014-09-24 16:00,2014-09-25 16:00,2014-09-24 16:00,2014-09-25 16:00,2014-12-13 16:00,2014-12-14 16:00,,PT_Normal,,,,,MX3R7JR2RWOeYIlvssi6FQ,scd4RxKlFEKirfC5/3F/SA,,,N,0,0,,,2014-02-17 15:27,2014-03-01 17:09,admin,admin,
1192,127990,6764,35313,6640,0,N,N,N,CP_Drtn,TT_Task,DT_FixedDrtn,TK_NotStart,HHI.1745,Mechanical Completion (MCC) & Final Inspection Before Hydrotesting,,450,0,10,0,24,24,10,40,0,40,,,,2014-12-14 16:00,2014-12-15 16:00,,2014-10-22 16:00,2014-10-23 16:00,2014-10-22 16:00,2014-10-23 16:00,2014-10-22 16:00,2014-10-23 16:00,2014-12-14 16:00,2014-12-15 16:00,,PT_Normal,,,,,H+4GeCGeRZCyuI1Lv0ywFg,I/ZuckRQW0CnfKHiaMCH3g,,,N,0,0,,,2014-02-17 15:27,2014-03-01 17:09,admin,admin,
1193,127991,6764,35315,6640,0,N,N,N,CP_Drtn,TT_Task,DT_FixedDrtn,TK_NotStart,HHI.1568,Perform RT for Tank#1 & #2,,450,0,10,0,0,0,10,0,0,0,,,,2014-07-01 11:00,2014-07-02 15:00,,2014-05-08 07:00,2014-05-08 17:00,2014-05-08 07:00,2014-05-08 17:00,2014-05-08 07:00,2014-05-08 17:00,2014-07-01 11:00,2014-07-02 15:00,,PT_Normal,,,,,ZInhjLStQte1lpSXBZezdg,Eh8Uq8uuyEm12NkhdNMgPg,,,N,0,0,,,2014-02-17 15:27,2014-03-01 17:09,admin,admin,
1194,127992,6764,35316,6640,0,N,N,N,CP_Drtn,TT_Task,DT_FixedDrtn,TK_NotStart,HHI.1547,Weld Outer Vertical Seam/Install the Stairways support on Shell,,450,0,10,0,384.000002,384.000002,10,85.333333,0,85.333333,,,,2014-06-03 07:00,2014-06-03 17:00,,2014-04-12 07:00,2014-04-12 17:00,2014-04-12 07:00,2014-04-12 17:00,2014-04-12 07:00,2014-04-12 17:00,2014-06-03 07:00,2014-06-03 17:00,,PT_Normal,,,,,0FP/5YdsS/qPTgijynwAqg,8yQHhFwva0m6MP9xnczyzA,,,N,0,0,,,2014-02-17 15:27,2014-03-01 17:09,admin,admin,
1195,127993,6764,35316,6640,0,N,N,N,CP_Drtn,TT_Task,DT_FixedDrtn,TK_NotStart,HHI.1548,"Backgouge,Grinding & NDT Inside Vertical Seam",,450,0,10,0,101.333333,101.333333,10,33.066667,0,33.066667,,,,2014-06-04 07:00,2014-06-04 17:00,,2014-04-13 07:00,2014-04-13 17:00,2014-04-13 07:00,2014-04-13 17:00,2014-04-13 07:00,2014-04-13 17:00,2014-06-04 07:00,2014-06-04 17:00,,PT_Normal,,,,,bmK0E8LzTC+6LMCCtDroyw,l1DHWi8Iv0y6PkG1epYfPw,,,N,0,0,,,2014-02-17 15:27,2014-03-01 17:09,admin,admin,
1196,127994,6764,35316,6640,0,N,N,N,CP_Drtn,TT_Task,DT_FixedDrtn,TK_NotStart,HHI.1549,Weld Inside Vertical Seam,,450,0,10,0,202.666668,202.666668,10,85.333333,0,85.333333,,,,2014-06-05 07:00,2014-06-05 17:00,,2014-04-14 07:00,2014-04-14 17:00,2014-04-14 07:00,2014-04-14 17:00,2014-04-14 07:00,2014-04-14 17:00,2014-06-05 07:00,2014-06-05 17:00,,PT_Normal,,,,,caGb04z0SkWrrOb1E1pE3g,vABIbaNOV0C5hRtL4qqq8A,,,N,0,0,,,2014-02-17 15:27,2014-03-01 17:09,admin,admin,
1197,127995,6764,35316,6640,0,N,N,N,CP_Drtn,TT_Task,DT_FixedDrtn,TK_NotStart,HHI.1550,"""""Weld Outer Horizontal Seam between Shell Course # 1 & 2""""",,450,0,20,0,608,608,20,166.4,0,166.4,,,,2014-06-07 07:00,2014-06-08 17:00,,2014-04-15 07:00,2014-04-16 17:00,2014-04-15 07:00,2014-04-16 17:00,2014-04-15 07:00,2014-04-16 17:00,2014-06-07 07:00,2014-06-08 17:00,,PT_Normal,,,,,ecDFCkwJSguue/IcmpyGoA,7Mts/JYoiUmUswrKrHYpdA,,,N,0,0,,,2014-02-17 15:27,2014-03-01 17:09,admin,admin,
1198,127996,6764,35316,6640,0,N,N,N,CP_Drtn,TT_Task,DT_FixedDrtn,TK_NotStart,HHI.1551,"""""Backgouge & NDT Inside Horizontal Seam between Shell Course# 1 & 2""""",,450,0,10,0,122.666668,122.666668,10,85.333333,0,85.333333,,,,2014-06-09 07:00,2014-06-09 17:00,,2014-04-17 07:00,2014-04-17 17:00,2014-04-17 07:00,2014-04-17 17:00,2014-04-17 07:00,2014-04-17 17:00,2014-06-09 07:00,2014-06-09 17:00,,PT_Normal,,,,,b/qiLt1QSP+9LDGAamDodQ,i9bEs6zNzkiBADApyugL8g,,,N,0,0,,,2014-02-17 15:27,2014-03-01 17:09,admin,admin,
1199,127997,6764,35316,6640,0,N,N,N,CP_Drtn,TT_Task,DT_FixedDrtn,TK_NotStart,HHI.1552,"Weld Inner Horizontal Seam between Shell Course # 1 & 2""""",,450,0,20,0,608,608,20,166.4,0,166.4,,,,2014-06-10 07:00,2014-06-11 17:00,,2014-04-19 07:00,2014-04-20 17:00,2014-04-19 07:00,2014-04-20 17:00,2014-04-19 07:00,2014-04-20 17:00,2014-06-10 07:00,2014-06-11 17:00,,PT_Normal,,,,,xzlS2apcRQG4+cX8y9pdPw,xDE9VjpM40aaZPKdTd9kjg,,,N,0,0,,,2014-02-17 15:27,2014-03-01 17:09,admin,admin,
1200,127998,6764,35316,6640,0,N,N,N,CP_Drtn,TT_Task,DT_FixedDrtn,TK_NotStart,HHI.1553,Weld Shell Course# 1 to Annular Plate (from inside),,450,0,10,0,405.333336,405.333336,10,85.333333,0,85.333333,,,,2014-06-12 07:00,2014-06-12 17:00,,2014-04-21 07:00,2014-04-21 17:00,2014-04-21 07:00,2014-04-21 17:00,2014-04-21 07:00,2014-04-21 17:00,2014-06-12 07:00,2014-06-12 17:00,,PT_Normal,,,,,7VufGu80SGmazgwJNN4exQ,ihOkRI1jUEiA7vZnMwViOw,,,N,0,0,,,2014-02-17 15:27,2014-03-01 17:09,admin,admin,
1201,127999,6764,35316,6640,0,N,N,N,CP_Drtn,TT_Task,DT_FixedDrtn,TK_NotStart,HHI.1554,"Perform PT from inside,Complete the welding from outside & Perform Vaccum Box Testing",,450,0,10,0,426.666665,426.666665,10,128,0,128,,,,2014-06-14 07:00,2014-06-14 17:00,,2014-04-22 07:00,2014-04-22 17:00,2014-04-22 07:00,2014-04-22 17:00,2014-04-22 07:00,2014-04-22 17:00,2014-06-14 07:00,2014-06-14 17:00,,PT_Normal,,,,,qPr34qytQlOvGz2S91Givw,l+9gf1MSsUGHcbyVIQl0HA,,,N,0,0,,,2014-02-17 15:27,2014-03-01 17:09,admin,admin,
1202,128000,6764,35316,6640,0,N,N,N,CP_Drtn,TT_Task,DT_FixedDrtn,TK_NotStart,HHI.1556,Quailty Check(Visual Inspection),,450,0,120,0,27.111111,27.111111,120,33.066667,0,33.066667,,,,2014-06-02 07:00,2014-06-15 17:00,,2014-04-10 07:00,2014-04-23 17:00,2014-04-10 07:00,2014-04-23 17:00,2014-04-10 07:00,2014-04-23 17:00,2014-06-02 07:00,2014-06-15 17:00,,PT_Normal,,,,,PxNf/MvRSQiY4t7yfrQg2A,2Z5Izau3TUWrEpCOebD1jQ,,,N,0,0,,,2014-02-17 15:27,2014-03-01 17:09,admin,admin,
1203,128001,6764,35316,6640,0,N,N,N,CP_Drtn,TT_Task,DT_FixedDrtn,TK_NotStart,HHI.1546,Erect & Tack Shell Course # 2 & Install Stagging Brackets,,450,0,10,0,272,272,10,32,0,32,,,,2014-06-02 07:00,2014-06-02 17:00,,2014-04-10 07:00,2014-04-10 17:00,2014-04-10 07:00,2014-04-10 17:00,2014-04-10 07:00,2014-04-10 17:00,2014-06-02 07:00,2014-06-02 17:00,,PT_Normal,,,,,LOAwlcQgRoedV+5T3ilfMw,XmcoQy0jp0yL/lTEbqONGw,,,N,0,0,,,2014-02-17 15:27,2014-03-01 17:09,admin,admin,
1204,128002,6764,35316,6640,0,N,N,N,CP_Drtn,TT_Task,DT_FixedDrtn,TK_NotStart,HHI.1555,Weld Bottom Sketch Plates to Annular Plate,,450,0,10,0,0,0,10,0,0,0,,,,2014-06-15 07:00,2014-06-15 17:00,,2014-04-23 07:00,2014-04-23 17:00,2014-04-23 07:00,2014-04-23 17:00,2014-04-23 07:00,2014-04-23 17:00,2014-06-15 07:00,2014-06-15 17:00,,PT_Normal,,,,,JGvn1PCcSSGy472jR0SwtA,/tfiv/Dzq0O4/BZlFL0wNw,,,N,0,0,,,2014-02-17 15:27,2014-03-01 17:09,admin,admin,
1205,128003,6764,35317,6640,0,N,N,N,CP_Drtn,TT_Task,DT_FixedDrtn,TK_NotStart,HHI.1557,Erect & Tack Shell Course # 2& Install Stagging Brackets,,450,0,10,0,340,340,10,48,0,48,,,,2014-06-16 07:00,2014-06-16 17:00,,2014-04-24 07:00,2014-04-24 17:00,2014-04-24 07:00,2014-04-24 17:00,2014-04-24 07:00,2014-04-24 17:00,2014-06-16 07:00,2014-06-16 17:00,,PT_Normal,,,,,IRppe5InQCSUqPiB+ZC0Vg,N53S8e2I+ECU4Y+sS/yD8Q,,,N,0,0,,,2014-02-17 15:27,2014-03-01 17:09,admin,admin,
1206,128004,6764,35317,6640,0,N,N,N,CP_Drtn,TT_Task,DT_FixedDrtn,TK_NotStart,HHI.1558,Weld Outer Vertical Seam/Install the Stairways support on Shell,,450,0,10,0,384.000002,384.000002,10,85.333333,0,85.333333,,,,2014-06-17 07:00,2014-06-17 17:00,,2014-04-26 07:00,2014-04-26 17:00,2014-04-26 07:00,2014-04-26 17:00,2014-04-26 07:00,2014-04-26 17:00,2014-06-17 07:00,2014-06-17 17:00,,PT_Normal,,,,,qWlM+fYSSO2k5KTzfS2qDA,x1GTGLla6UW2Re6uWTV0vw,,,N,0,0,,,2014-02-17 15:27,2014-03-01 17:09,admin,admin,
1207,128005,6764,35317,6640,0,N,N,N,CP_Drtn,TT_Task,DT_FixedDrtn,TK_NotStart,HHI.1559,"Backgouge,Grinding & NDT Inside Vertical Seam",,450,0,10,0,97.111111,97.111111,10,33.066667,0,33.066667,,,,2014-06-18 07:00,2014-06-18 17:00,,2014-04-27 07:00,2014-04-27 17:00,2014-04-27 07:00,2014-04-27 17:00,2014-04-27 07:00,2014-04-27 17:00,2014-06-18 07:00,2014-06-18 17:00,,PT_Normal,,,,,gJU4s3CSQayuAxwqe0dDyg,Uiu9KKHm4EqIMRwxzQEJIw,,,N,0,0,,,2014-02-17 15:27,2014-03-01 17:09,admin,admin,
1208,128006,6764,35317,6640,0,N,N,N,CP_Drtn,TT_Task,DT_FixedDrtn,TK_NotStart,HHI.1560,Weld Inside Vertical Seam,,450,0,10,0,202.666668,202.666668,10,85.333333,0,85.333333,,,,2014-06-19 07:00,2014-06-19 17:00,,2014-04-28 07:00,2014-04-28 17:00,2014-04-28 07:00,2014-04-28 17:00,2014-04-28 07:00,2014-04-28 17:00,2014-06-19 07:00,2014-06-19 17:00,,PT_Normal,,,,,ZSHYrI0QRrWgQ2DJUSOYmQ,Lv1TiOUfJUGhEehgzTGvCw,,,N,0,0,,,2014-02-17 15:27,2014-03-01 17:09,admin,admin,
1209,128007,6764,35317,6640,0,N,N,N,CP_Drtn,TT_Task,DT_FixedDrtn,TK_NotStart,HHI.1561,"""""Weld Outer Horizontal Seam between Shell Course # 1 & 2""""",,450,0,20,0,608,608,20,166.4,0,166.4,,,,2014-06-21 07:00,2014-06-22 17:00,,2014-04-29 07:00,2014-04-30 17:00,2014-04-29 07:00,2014-04-30 17:00,2014-04-29 07:00,2014-04-30 17:00,2014-06-21 07:00,2014-06-22 17:00,,PT_Normal,,,,,E4EostHbSlSGs9Uw3GbOpQ,0IFb/ytcK02fl9nqltqp/A,,,N,0,0,,,2014-02-17 15:27,2014-03-01 17:09,admin,admin,
1210,128008,6764,35317,6640,0,N,N,N,CP_Drtn,TT_Task,DT_FixedDrtn,TK_NotStart,HHI.1562,"""""Backgouge & NDT Inside Horizontal Seam between Shell Course# 1 & 2""""",,450,0,10,0,122.666668,122.666668,10,85.333333,0,85.333333,,,,2014-06-23 07:00,2014-06-23 17:00,,2014-05-01 07:00,2014-05-01 17:00,2014-05-01 07:00,2014-05-01 17:00,2014-05-01 07:00,2014-05-01 17:00,2014-06-23 07:00,2014-06-23 17:00,,PT_Normal,,,,,QacmnLYJRPmEum1jRJCkEA,lzWK0P01l0+c31KX1s+pYA,,,N,0,0,,,2014-02-17 15:27,2014-03-01 17:09,admin,admin,
1211,128009,6764,35317,6640,0,N,N,N,CP_Drtn,TT_Task,DT_FixedDrtn,TK_NotStart,HHI.1563,"Weld Inner Horizontal Seam between Shell Course # 1 & 2""""",,450,0,20,0,608,608,20,166.4,0,166.4,,,,2014-06-24 07:00,2014-06-25 17:00,,2014-05-03 07:00,2014-05-04 17:00,2014-05-03 07:00,2014-05-04 17:00,2014-05-03 07:00,2014-05-04 17:00,2014-06-24 07:00,2014-06-25 17:00,,PT_Normal,,,,,nLelH+8aQm+yaXH2eatozQ,4+weyCe4LkeyWvLPNkAgmA,,,N,0,0,,,2014-02-17 15:27,2014-03-01 17:09,admin,admin,
1212,128010,6764,35317,6640,0,N,N,N,CP_Drtn,TT_Task,DT_FixedDrtn,TK_NotStart,HHI.1564,Weld Shell Course# 1 to Annular Plate (from inside),,450,0,10,0,405.333336,405.333336,10,85.333333,0,85.333333,,,,2014-06-26 07:00,2014-06-26 17:00,,2014-05-05 07:00,2014-05-05 17:00,2014-05-05 07:00,2014-05-05 17:00,2014-05-05 07:00,2014-05-05 17:00,2014-06-26 07:00,2014-06-26 17:00,,PT_Normal,,,,,j1takzb2Q/m8Zq/eYfLe/g,3n/TNohGCEeIiNBZ/3nCVA,,,N,0,0,,,2014-02-17 15:27,2014-03-01 17:09,admin,admin,
1213,128011,6764,35317,6640,0,N,N,N,CP_Drtn,TT_Task,DT_FixedDrtn,TK_NotStart,HHI.1565,"Perform PT from inside,Complete the welding from outside & Perform Vaccum Box Testing",,450,0,10,0,426.666665,426.666665,10,128,0,128,,,,2014-06-28 09:00,2014-06-29 13:00,,2014-05-06 07:00,2014-05-06 17:00,2014-05-06 07:00,2014-05-06 17:00,2014-05-06 07:00,2014-05-06 17:00,2014-06-28 09:00,2014-06-29 13:00,,PT_Normal,,,,,xL+wVOFaSxCBY/MHYmHMJA,UbAwdrzqvkO66Cq25P8F9A,,,N,0,0,,,2014-02-17 15:27,2014-03-01 17:09,admin,admin,
1214,128012,6764,35317,6640,0,N,N,N,CP_Drtn,TT_Task,DT_FixedDrtn,TK_NotStart,HHI.1567,Quailty Check(Visual Inspection),,450,0,120,0,34.222222,34.222222,120,33.066667,0,33.066667,,,,2014-06-16 07:00,2014-07-01 11:00,,2014-04-24 07:00,2014-05-07 17:00,2014-04-24 07:00,2014-05-07 17:00,2014-04-24 07:00,2014-05-07 17:00,2014-06-16 07:00,2014-07-01 11:00,,PT_Normal,,,,,cU7HTZ4mTMy31t41ce6lpw,z942WApgs0eJfAMoFzYjTA,,,N,0,0,,,2014-02-17 15:27,2014-03-01 17:09,admin,admin,
1215,128013,6764,35317,6640,0,N,N,N,CP_Drtn,TT_Task,DT_FixedDrtn,TK_NotStart,HHI.1566,Weld Bottom Sketch Plates to Annular Plate,,450,0,10,0,0,0,10,0,0,0,,,,2014-06-29 13:00,2014-07-01 11:00,,2014-05-07 07:00,2014-05-07 17:00,2014-05-07 07:00,2014-05-07 17:00,2014-05-07 07:00,2014-05-07 17:00,2014-06-29 13:00,2014-07-01 11:00,,PT_Normal,,,,,/LWlJyOZQcKwj63/3mRHhw,INSwGB9ry0+kObBQv//mPg,,,N,0,0,,,2014-02-17 15:27,2014-03-01 17:09,admin,admin,
1216,128014,6764,35319,6640,0,N,N,N,CP_Drtn,TT_Task,DT_FixedDrtn,TK_NotStart,HHI.1508,"Install Sealent,Erect & Tack of Annular Plates",,490,0,10,0,80,80,10,8,0,8,,,,2014-04-27 07:00,2014-04-27 17:00,,2014-03-01 07:00,2014-03-01 17:00,2014-03-01 07:00,2014-03-01 17:00,2014-03-01 07:00,2014-03-01 17:00,2014-04-27 07:00,2014-04-27 17:00,,PT_Normal,,,,,xhCvB9h4SUKFFCiChxWkPw,y+shSUdS80KoqWNcfboEJg,,,N,0,0,,,2014-02-17 15:27,2014-03-01 17:09,admin,admin,
1217,128015,6764,35319,6640,0,N,N,N,CP_Drtn,TT_Task,DT_FixedDrtn,TK_NotStart,HHI.1509,Welding of Annular Plates,,490,0,10,0,180,180,10,40,0,40,,,,2014-04-28 07:00,2014-04-28 17:00,,2014-03-02 07:00,2014-03-02 17:00,2014-03-02 07:00,2014-03-02 17:00,2014-03-02 07:00,2014-03-02 17:00,2014-04-28 07:00,2014-04-28 17:00,,PT_Normal,,,,,RNYzP/PSR1WIpWhouwWchQ,Pqk0GhP1vUKD1bpSyBQjSw,,,N,0,0,,,2014-02-17 15:27,2014-03-01 17:09,admin,admin,
1218,128016,6764,35319,6640,0,N,N,N,CP_Drtn,TT_Task,DT_FixedDrtn,TK_NotStart,HHI.1510,"Quailty Check (Visual Inspection,PT & Vaccum Box Test)",,490,0,20,0,40,40,20,40,0,40,,,,2014-04-27 07:00,2014-04-28 17:00,,2014-03-01 07:00,2014-03-02 17:00,2014-03-01 07:00,2014-03-02 17:00,2014-03-01 07:00,2014-03-02 17:00,2014-04-27 07:00,2014-04-28 17:00,,PT_Normal,,,,,EHrv+iM9TqSSJ3853+73og,NuaL4jmMN0upmOgQiU9DTA,,,N,0,0,,,2014-02-17 15:27,2014-03-01 17:09,admin,admin,
1219,128017,6764,35320,6640,0,N,N,N,CP_Drtn,TT_Task,DT_FixedDrtn,TK_NotStart,HHI.1512,"Erect,Fitup of Sump",,510,20,10,0,51.999998,51.999998,10,42.666666,0,42.666666,,,,2014-05-10 07:00,2014-05-10 17:00,,2014-03-11 07:00,2014-03-11 17:00,2014-03-11 07:00,2014-03-11 17:00,2014-03-11 07:00,2014-03-11 17:00,2014-05-10 07:00,2014-05-10 17:00,,PT_Normal,,,,,zPQf8JLKRyeQO8z6LH7mlw,7bvyWcoTK0yTldquwZrHVg,,,N,0,0,,,2014-02-17 15:27,2014-03-01 17:09,admin,admin,
1220,128018,6764,35320,6640,0,N,N,N,CP_Drtn,TT_Task,DT_FixedDrtn,TK_NotStart,HHI.1513,Weld Sump,,490,0,10,0,17.066666,17.066666,10,42.666666,0,42.666666,,,,2014-05-11 07:00,2014-05-11 17:00,,2014-03-15 07:00,2014-03-15 17:00,2014-03-15 07:00,2014-03-15 17:00,2014-03-15 07:00,2014-03-15 17:00,2014-05-11 07:00,2014-05-11 17:00,,PT_Normal,,,,,+Q74DqsNQvm/sj2wTTpzGA,V+xyf037yUSG9FZ7Lfu5pA,,,N,0,0,,,2014-02-17 15:27,2014-03-01 17:09,admin,admin,
1221,128019,6764,35320,6640,0,N,N,N,CP_Drtn,TT_Task,DT_FixedDrtn,TK_NotStart,HHI.1511,Prepare & Lay Down Bottom Plates,,490,0,20,0,347.999998,347.999998,20,25.6,0,25.6,,,,2014-04-29 07:00,2014-04-30 17:00,,2014-03-03 07:00,2014-03-04 17:00,2014-03-03 07:00,2014-03-04 17:00,2014-03-03 07:00,2014-03-04 17:00,2014-04-29 07:00,2014-04-30 17:00,,PT_Normal,,,,,qm2bMnULT5CIwECW2XBA2g,RFrBDNTLWkieicUS/x4jHA,,,N,0,0,,,2014-02-17 15:27,2014-03-01 17:09,admin,admin,
1222,128020,6764,35320,6640,0,N,N,N,CP_Drtn,TT_Task,DT_FixedDrtn,TK_NotStart,HHI.1518,Quailty Check (Visual Inspection& Vaccum Box Test),,490,40,110,0,21.333334,21.333334,110,42.666666,0,42.666666,,,,2014-04-29 07:00,2014-05-11 17:00,,2014-03-03 07:00,2014-03-15 17:00,2014-03-03 07:00,2014-03-15 17:00,2014-03-03 07:00,2014-03-15 17:00,2014-04-29 07:00,2014-05-11 17:00,,PT_Normal,,,,,sJt5BLQKQtyWRwFiUaZiBA,6xYn/IR5DkC2gZTiV0dWvQ,,,N,0,0,,,2014-02-17 15:27,2014-03-01 17:09,admin,admin,
1223,128021,6764,35320,6640,0,N,N,N,CP_Drtn,TT_Task,DT_FixedDrtn,TK_NotStart,HHI.1514,Fit/Tack Bottom Plates-Short Seams,,490,0,20,0,0,0,20,0,0,0,,,,2014-05-03 07:00,2014-05-04 17:00,,2014-03-06 07:00,2014-03-08 17:00,2014-03-06 07:00,2014-03-08 17:00,2014-03-06 07:00,2014-03-08 17:00,2014-05-03 07:00,2014-05-04 17:00,,PT_Normal,,,,,cQPGN0m2QOWbqwbzjSnW4w,22EVjBwY3kC4uz9zaBa0Nw,,,N,0,0,,,2014-02-17 15:27,2014-03-01 17:09,admin,admin,
1224,128022,6764,35320,6640,0,N,N,N,CP_Drtn,TT_Task,DT_FixedDrtn,TK_NotStart,HHI.1515,Weld Short Seams,,490,0,20,0,0,0,20,0,0,0,,,,2014-05-04 07:00,2014-05-05 17:00,,2014-03-08 07:00,2014-03-09 17:00,2014-03-08 07:00,2014-03-09 17:00,2014-03-08 07:00,2014-03-09 17:00,2014-05-04 07:00,2014-05-05 17:00,,PT_Normal,,,,,UpO6c0WURdmMQaB9Ec0TQA,HT+mKHUthEmYrZHYIONcsA,,,N,0,0,,,2014-02-17 15:27,2014-03-01 17:09,admin,admin,
1225,128023,6764,35320,6640,0,N,N,N,CP_Drtn,TT_Task,DT_FixedDrtn,TK_NotStart,HHI.1516,Fit/Tack Bottom Plates-Long Seams,,490,0,20,0,0,0,20,0,0,0,,,,2014-05-06 07:00,2014-05-07 17:00,,2014-03-10 07:00,2014-03-11 17:00,2014-03-10 07:00,2014-03-11 17:00,2014-03-10 07:00,2014-03-11 17:00,2014-05-06 07:00,2014-05-07 17:00,,PT_Normal,,,,,2SBFcDc4Tpmk8zle0LUTTg,2b87sw4sh0eU2TycY3KUNg,,,N,0,0,,,2014-02-17 15:27,2014-03-01 17:09,admin,admin,
1226,128024,6764,35320,6640,0,N,N,N,CP_Drtn,TT_Task,DT_FixedDrtn,TK_NotStart,HHI.1517,Weld Long Seams,,490,0,40,0,0,0,40,0,0,0,,,,2014-05-07 07:00,2014-05-11 17:00,,2014-03-11 07:00,2014-03-15 17:00,2014-03-11 07:00,2014-03-15 17:00,2014-03-11 07:00,2014-03-15 17:00,2014-05-07 07:00,2014-05-11 17:00,,PT_Normal,,,,,0bGKx294QpGUabLuS43QBA,TwZLoLmNekG/crL1+T+wQw,,,N,0,0,,,2014-02-17 15:27,2014-03-01 17:09,admin,admin,
1227,128025,6764,35322,6640,0,N,N,N,CP_Drtn,TT_Task,DT_FixedDrtn,TK_NotStart,HHI.1683,Erect & Tack Shell Course # 8 & Install Stagging Brackets,,450,0,10,0,420,420,10,32,0,32,,,,2014-10-08 16:00,2014-10-09 16:00,,2014-08-16 16:00,2014-08-17 16:00,2014-08-16 16:00,2014-08-17 16:00,2014-08-16 16:00,2014-08-17 16:00,2014-10-08 16:00,2014-10-09 16:00,,PT_Normal,,,,,7WKWoPfsQhW4Bh16nfDLjw,FwGEKCAF9E2UM/zfGG7lEQ,,,N,0,0,,,2014-02-17 15:27,2014-03-01 17:09,admin,admin,
1228,128026,6764,35322,6640,0,N,N,N,CP_Drtn,TT_Task,DT_FixedDrtn,TK_NotStart,HHI.1684,Weld Outer Vertical Seam /Install the Stairways support on Shell,,450,0,10,0,170.666666,170.666666,10,42.666666,0,42.666666,,,,2014-10-09 16:00,2014-10-11 16:00,,2014-08-17 16:00,2014-08-18 16:00,2014-08-17 16:00,2014-08-18 16:00,2014-08-17 16:00,2014-08-18 16:00,2014-10-09 16:00,2014-10-11 16:00,,PT_Normal,,,,,nhdTu0akTBWY9H4Nl4IFGA,fNVZPc+q1kyrlHCPnBNqTw,,,N,0,0,,,2014-02-17 15:27,2014-03-01 17:09,admin,admin,
1229,128027,6764,35322,6640,0,N,N,N,CP_Drtn,TT_Task,DT_FixedDrtn,TK_NotStart,HHI.1685,Backgouge & NDT Inside Vertical Seam,,450,0,10,0,90.666666,90.666666,10,42.666666,0,42.666666,,,,2014-10-11 16:00,2014-10-12 16:00,,2014-08-18 16:00,2014-08-19 16:00,2014-08-18 16:00,2014-08-19 16:00,2014-08-18 16:00,2014-08-19 16:00,2014-10-11 16:00,2014-10-12 16:00,,PT_Normal,,,,,/AYm1wQlQH+LrOW7rWzRUQ,BE2XLtpX5EW6cfrUZDwRHg,,,N,0,0,,,2014-02-17 15:27,2014-03-01 17:09,admin,admin,
1230,128028,6764,35322,6640,0,N,N,N,CP_Drtn,TT_Task,DT_FixedDrtn,TK_NotStart,HHI.1686,Weld Inside Vertical Seam,,450,0,10,0,170.666666,170.666666,10,42.666666,0,42.666666,,,,2014-10-12 16:00,2014-10-13 16:00,,2014-08-19 16:00,2014-08-20 16:00,2014-08-19 16:00,2014-08-20 16:00,2014-08-19 16:00,2014-08-20 16:00,2014-10-12 16:00,2014-10-13 16:00,,PT_Normal,,,,,nKOutrW2TGq/YeAC1vH4HQ,BC48LwVPTE6yfmCQSO39EQ,,,N,0,0,,,2014-02-17 15:27,2014-03-01 17:09,admin,admin,
1231,128029,6764,35322,6640,0,N,N,N,CP_Drtn,TT_Task,DT_FixedDrtn,TK_NotStart,HHI.1687,"""""Weld Outer Horizontal Seam between Shell Course # 7 & 8",,450,0,10,0,167.111111,167.111111,10,33.066667,0,33.066667,,,,2014-10-13 16:00,2014-10-14 16:00,,2014-08-20 16:00,2014-08-21 16:00,2014-08-20 16:00,2014-08-21 16:00,2014-08-20 16:00,2014-08-21 16:00,2014-10-13 16:00,2014-10-14 16:00,,PT_Normal,,,,,y2Hj/M0GQJKqoW7DbL5jAg,zrTQnGBJGkaIeBLCURKSxg,,,N,0,0,,,2014-02-17 15:27,2014-03-01 17:09,admin,admin,
1232,128030,6764,35322,6640,0,N,N,N,CP_Drtn,TT_Task,DT_FixedDrtn,TK_NotStart,HHI.1688,"""""Backgouge & NDT Inside Horizontal Seam between Shell Course# 7 & 8",,450,0,10,0,111.999998,111.999998,10,42.666667,0,42.666667,,,,2014-10-14 16:00,2014-10-15 16:00,,2014-08-21 16:00,2014-08-23 11:00,2014-08-21 16:00,2014-08-23 11:00,2014-08-21 16:00,2014-08-23 11:00,2014-10-14 16:00,2014-10-15 16:00,,PT_Normal,,,,,/iY1cvSeSl6gIQJEuA+jHA,5TbxDzMEKkaCQp4Y+g/ISg,,,N,0,0,,,2014-02-17 15:27,2014-03-01 17:09,admin,admin,
1233,128031,6764,35322,6640,0,N,N,N,CP_Drtn,TT_Task,DT_FixedDrtn,TK_NotStart,HHI.1689,Weld Inner Horizontal Seam between Shell Course # 7 & 8,,450,0,10,0,188.444444,188.444444,10,33.066667,0,33.066667,,,,2014-10-15 16:00,2014-10-16 16:00,,2014-08-23 11:00,2014-08-24 11:00,2014-08-23 11:00,2014-08-24 11:00,2014-08-23 11:00,2014-08-24 11:00,2014-10-15 16:00,2014-10-16 16:00,,PT_Normal,,,,,bCEySMB+Qc+CzIgE3dE+DA,tdDJZWlR7UiHU/B35jeFFQ,,,N,0,0,,,2014-02-17 15:27,2014-03-01 17:09,admin,admin,
1234,128032,6764,35322,6640,0,N,N,N,CP_Drtn,TT_Task,DT_FixedDrtn,TK_NotStart,HHI.1691,Quailty Check(Visual Inspection & PT& Air Leak Test for Shell Nozzle & Pad),,500,0,70,0,55.555555,55.555555,70,33.066667,0,33.066667,,,,2014-10-14 16:00,2014-10-22 16:00,,2014-08-16 16:00,2014-08-24 11:00,2014-08-16 16:00,2014-08-24 11:00,2014-08-16 16:00,2014-08-24 11:00,2014-10-14 16:00,2014-10-22 16:00,,PT_Normal,,,,,AvAtVW2dTuedc5whXv1qeQ,aqDQWgkssEy2vleLt4BMdA,,,N,0,0,,,2014-02-17 15:27,2014-03-01 17:09,admin,admin,
1235,128033,6764,35322,6640,0,N,N,N,CP_Drtn,TT_Task,DT_FixedDrtn,TK_NotStart,HHI.1690,"Fit,Weld Nozzle on Shell",,500,0,10,0,0,0,10,0,0,0,,,,2014-10-21 16:00,2014-10-22 16:00,,2014-08-23 11:00,2014-08-24 11:00,2014-08-23 11:00,2014-08-24 11:00,2014-08-23 11:00,2014-08-24 11:00,2014-10-21 16:00,2014-10-22 16:00,,PT_Normal,,,,,+aFRCSiZRGCAxBfCxmW4Zw,KhiljxtS6Um7dlUyMDZqnQ,,,N,0,0,,,2014-02-17 15:27,2014-03-01 17:09,admin,admin,
1236,128034,6764,35323,6640,0,N,N,N,CP_Drtn,TT_Task,DT_FixedDrtn,TK_NotStart,HHI.1692,Erect & Tack Shell Course # 8 & Install Stagging Brackets,,500,50,10,0,400,400,10,48,0,48,,,,2014-10-16 16:00,2014-10-18 16:00,,2014-08-18 16:00,2014-08-19 16:00,2014-08-18 16:00,2014-08-19 16:00,2014-08-18 16:00,2014-08-19 16:00,2014-10-16 16:00,2014-10-18 16:00,,PT_Normal,,,,,BsFdI9KESKOPSQbRsRV7SA,elAgm00Y6ke2OzAyN7XcMg,,,N,0,0,,,2014-02-17 15:27,2014-03-01 17:09,admin,admin,
1237,128035,6764,35323,6640,0,N,N,N,CP_Drtn,TT_Task,DT_FixedDrtn,TK_NotStart,HHI.1693,Weld Outer Vertical Seam/Install the Stairways support on Shell,,450,0,10,0,160,160,10,42.666666,0,42.666666,,,,2014-10-16 16:00,2014-10-18 16:00,,2014-08-24 11:00,2014-08-25 11:00,2014-08-24 11:00,2014-08-25 11:00,2014-08-24 11:00,2014-08-25 11:00,2014-10-16 16:00,2014-10-18 16:00,,PT_Normal,,,,,zgHYwwYMQH6CPEFUuTjHWQ,gKdIxo/1Z06v7ujtlN7bxQ,,,N,0,0,,,2014-02-17 15:27,2014-03-01 17:09,admin,admin,
1238,128036,6764,35323,6640,0,N,N,N,CP_Drtn,TT_Task,DT_FixedDrtn,TK_NotStart,HHI.1694,Backgouge & NDT Inside Vertical Seam,,450,0,10,0,90.666666,90.666666,10,42.666666,0,42.666666,,,,2014-10-18 16:00,2014-10-19 16:00,,2014-08-25 11:00,2014-08-26 11:00,2014-08-25 11:00,2014-08-26 11:00,2014-08-25 11:00,2014-08-26 11:00,2014-10-18 16:00,2014-10-19 16:00,,PT_Normal,,,,,z/02HoaRQyyh8cOgX7DK0g,LYmaucIAJ0ertovwl65QOg,,,N,0,0,,,2014-02-17 15:27,2014-03-01 17:09,admin,admin,
1239,128037,6764,35323,6640,0,N,N,N,CP_Drtn,TT_Task,DT_FixedDrtn,TK_NotStart,HHI.1695,Weld Inside Vertical Seam,,450,0,10,0,160,160,10,42.666666,0,42.666666,,,,2014-10-19 16:00,2014-10-20 16:00,,2014-08-26 11:00,2014-08-27 11:00,2014-08-26 11:00,2014-08-27 11:00,2014-08-26 11:00,2014-08-27 11:00,2014-10-19 16:00,2014-10-20 16:00,,PT_Normal,,,,,Ggry2OHDTbO18X//7A1jeA,Lgm3LfXVL0GA3gAI1qczpQ,,,N,0,0,,,2014-02-17 15:27,2014-03-01 17:09,admin,admin,
1240,128038,6764,35323,6640,0,N,N,N,CP_Drtn,TT_Task,DT_FixedDrtn,TK_NotStart,HHI.1696,"""""Weld Outer Horizontal Seam between Shell Course # 7 & 8",,450,0,10,0,160,160,10,33.066667,0,33.066667,,,,2014-10-20 16:00,2014-10-21 16:00,,2014-08-27 11:00,2014-08-28 11:00,2014-08-27 11:00,2014-08-28 11:00,2014-08-27 11:00,2014-08-28 11:00,2014-10-20 16:00,2014-10-21 16:00,,PT_Normal,,,,,9cStAwZ+S4K6BJJ8pl9LsA,FmJZKCsTb0+ngJPJOKAxdg,,,N,0,0,,,2014-02-17 15:27,2014-03-01 17:09,admin,admin,
1241,128039,6764,35323,6640,0,N,N,N,CP_Drtn,TT_Task,DT_FixedDrtn,TK_NotStart,HHI.1697,"""""Backgouge & NDT Inside Horizontal Seam between Shell Course#7 & 8",,450,0,10,0,122.666664,122.666664,10,42.666667,0,42.666667,,,,2014-10-21 16:00,2014-10-22 16:00,,2014-08-28 11:00,2014-08-29 13:30,2014-08-28 11:00,2014-08-29 13:30,2014-08-28 11:00,2014-08-29 13:30,2014-10-21 16:00,2014-10-22 16:00,,PT_Normal,,,,,/eW/ENR3T0SsADsi2qiqgw,4Mc1yjZlYUSfXNW8KpOl9w,,,N,0,0,,,2014-02-17 15:27,2014-03-01 17:09,admin,admin,
1242,128040,6764,35323,6640,0,N,N,N,CP_Drtn,TT_Task,DT_FixedDrtn,TK_NotStart,HHI.1698,Weld Inner Horizontal Seam between Shell Course #7 & 8,,450,0,10,0,188.444444,188.444444,10,33.066667,0,33.066667,,,,2014-10-22 16:00,2014-10-23 16:00,,2014-08-29 13:30,2014-08-30 16:00,2014-08-29 13:30,2014-08-30 16:00,2014-08-29 13:30,2014-08-30 16:00,2014-10-22 16:00,2014-10-23 16:00,,PT_Normal,,,,,RZrOCkYDRKC3ytfOwSLg1A,6tqBafzKxkeE0UvoXUZIlg,,,N,0,0,,,2014-02-17 15:27,2014-03-01 17:09,admin,admin,
1243,128041,6764,35323,6640,0,N,N,N,CP_Drtn,TT_Task,DT_FixedDrtn,TK_NotStart,HHI.1700,Quailty Check(Visual Inspection & PT for Shell Nozzle & Pad),,450,0,60,0,55.555555,55.555555,60,33.066667,0,33.066667,,,,2014-10-16 16:00,2014-10-23 16:00,,2014-08-24 11:00,2014-08-30 16:00,2014-08-24 11:00,2014-08-30 16:00,2014-08-24 11:00,2014-08-30 16:00,2014-10-16 16:00,2014-10-23 16:00,,PT_Normal,,,,,/ENI8qckSLiC/3ZPaoWqpg,hVpYldWMcEOA0jgEan6hkQ,,,N,0,0,,,2014-02-17 15:27,2014-03-01 17:09,admin,admin,
1244,128042,6764,35323,6640,0,N,N,N,CP_Drtn,TT_Task,DT_FixedDrtn,TK_NotStart,HHI.1699,"Fit,Weld Nozzle on Shell",,450,0,10,0,0,0,10,0,0,0,,,,2014-10-22 16:00,2014-10-23 16:00,,2014-08-29 13:30,2014-08-30 16:00,2014-08-29 13:30,2014-08-30 16:00,2014-08-29 13:30,2014-08-30 16:00,2014-10-22 16:00,2014-10-23 16:00,,PT_Normal,,,,,fNpvKj5ZRyOXO1URI6gFqw,aTZhcoJy+0W6wwKGYZDSIA,,,N,0,0,,,2014-02-17 15:27,2014-03-01 17:09,admin,admin,
1245,128043,6764,35324,6640,0,N,N,N,CP_Drtn,TT_Task,DT_FixedDrtn,TK_NotStart,HHI.1701,Perform RT for Tank#1 & #2,,450,0,10,0,0,0,10,0,0,0,,,,2014-10-23 16:00,2014-10-25 16:00,,2014-08-30 16:00,2014-08-31 16:00,2014-08-30 16:00,2014-08-31 16:00,2014-08-30 16:00,2014-08-31 16:00,2014-10-23 16:00,2014-10-25 16:00,,PT_Normal,,,,,HP6N9ASVTqiHFSb3cgqabw,BAnlUdZK7E6r8WembDI/pw,,,N,0,0,,,2014-02-17 15:27,2014-03-01 17:09,admin,admin,
1246,128044,6764,35326,6640,0,N,N,N,CP_Drtn,TT_Task,DT_FixedDrtn,TK_NotStart,HHI.1612,Erect & Tack Shell Course # 5 & Install Stagging Brackets,,450,0,10,0,380,380,10,48,0,48,,,,2014-08-14 11:00,2014-08-15 13:30,,2014-06-10 07:00,2014-06-10 17:00,2014-06-10 07:00,2014-06-10 17:00,2014-06-10 07:00,2014-06-10 17:00,2014-08-14 11:00,2014-08-15 13:30,,PT_Normal,,,,,rj9vzkffSkyXK+aliRFlLg,zokvSMiXV0qWgrM7YpIZ9A,,,N,0,0,,,2014-02-17 15:27,2014-03-01 17:09,admin,admin,
1247,128045,6764,35326,6640,0,N,N,N,CP_Drtn,TT_Task,DT_FixedDrtn,TK_NotStart,HHI.1613,Weld Outer Vertical Seam/Install the Stairways support on Shell,,450,0,10,0,167.111111,167.111111,10,33.066667,0,33.066667,,,,2014-08-15 13:30,2014-08-16 16:00,,2014-06-11 07:00,2014-06-11 17:00,2014-06-11 07:00,2014-06-11 17:00,2014-06-11 07:00,2014-06-11 17:00,2014-08-15 13:30,2014-08-16 16:00,,PT_Normal,,,,,HEtJlDbLS622Vqe/rf4udA,X7HwywpbsUma9Q5YOBYTLQ,,,N,0,0,,,2014-02-17 15:27,2014-03-01 17:09,admin,admin,
1248,128046,6764,35326,6640,0,N,N,N,CP_Drtn,TT_Task,DT_FixedDrtn,TK_NotStart,HHI.1614,Backgouge & NDT Inside Vertical Seam,,450,0,10,0,90.666666,90.666666,10,42.666666,0,42.666666,,,,2014-08-16 16:00,2014-08-17 16:00,,2014-06-12 07:00,2014-06-12 17:00,2014-06-12 07:00,2014-06-12 17:00,2014-06-12 07:00,2014-06-12 17:00,2014-08-16 16:00,2014-08-17 16:00,,PT_Normal,,,,,3UVH7WdeTXeBtloSIHvqCQ,T5L9zAyEs0+4DPYjvz4jUA,,,N,0,0,,,2014-02-17 15:27,2014-03-01 17:09,admin,admin,
1249,128047,6764,35326,6640,0,N,N,N,CP_Drtn,TT_Task,DT_FixedDrtn,TK_NotStart,HHI.1615,Weld Inside Vertical Seam,,450,0,10,0,160,160,10,33.066667,0,33.066667,,,,2014-08-17 16:00,2014-08-18 16:00,,2014-06-14 07:00,2014-06-14 17:00,2014-06-14 07:00,2014-06-14 17:00,2014-06-14 07:00,2014-06-14 17:00,2014-08-17 16:00,2014-08-18 16:00,,PT_Normal,,,,,LB90s2wSShaBGYwGN8wC0w,DHznS3VqzESu0H9DovZaiQ,,,N,0,0,,,2014-02-17 15:27,2014-03-01 17:09,admin,admin,
1250,128048,6764,35326,6640,0,N,N,N,CP_Drtn,TT_Task,DT_FixedDrtn,TK_NotStart,HHI.1616,"""""Weld Outer Horizontal Seam between Shell Course # 4 & 5""""",,450,0,10,0,320,320,10,85.333334,0,85.333334,,,,2014-08-18 16:00,2014-08-19 16:00,,2014-06-15 07:00,2014-06-15 17:00,2014-06-15 07:00,2014-06-15 17:00,2014-06-15 07:00,2014-06-15 17:00,2014-08-18 16:00,2014-08-19 16:00,,PT_Normal,,,,,4NTqi29fQ8O3+UoINjTXtw,5xNkEJX+506j2s2pXJwTeg,,,N,0,0,,,2014-02-17 15:27,2014-03-01 17:09,admin,admin,
1251,128049,6764,35326,6640,0,N,N,N,CP_Drtn,TT_Task,DT_FixedDrtn,TK_NotStart,HHI.1617,"""""Backgouge & NDT Inside Horizontal Seam between Shell Course# 4 & 5""""",,450,0,10,0,80,80,10,33.066667,0,33.066667,,,,2014-08-19 16:00,2014-08-20 16:00,,2014-06-16 07:00,2014-06-16 17:00,2014-06-16 07:00,2014-06-16 17:00,2014-06-16 07:00,2014-06-16 17:00,2014-08-19 16:00,2014-08-20 16:00,,PT_Normal,,,,,Gi95yAoFQxm132N5joL6kw,0wbRW7YUYkCMo3tCA7ZJog,,,N,0,0,,,2014-02-17 15:27,2014-03-01 17:09,admin,admin,
1252,128050,6764,35326,6640,0,N,N,N,CP_Drtn,TT_Task,DT_FixedDrtn,TK_NotStart,HHI.1618,"Weld Inner Horizontal Seam between Shell Course # 4 & 5""""",,450,0,10,0,405.333336,405.333336,10,85.333333,0,85.333333,,,,2014-08-20 16:00,2014-08-21 16:00,,2014-06-17 07:00,2014-06-17 17:00,2014-06-17 07:00,2014-06-17 17:00,2014-06-17 07:00,2014-06-17 17:00,2014-08-20 16:00,2014-08-21 16:00,,PT_Normal,,,,,AWpr7hVdRMmFxoyLf9YnBg,NJQt6750lk2L5HffQk6r1A,,,N,0,0,,,2014-02-17 15:27,2014-03-01 17:09,admin,admin,
1253,128051,6764,35326,6640,0,N,N,N,CP_Drtn,TT_Task,DT_FixedDrtn,TK_NotStart,HHI.1620,"Quailty Check(Visual Inspection,PT,Air Leak Test for Shell Nozzle)",,450,0,70,0,27.111111,27.111111,70,33.066667,0,33.066667,,,,2014-08-14 11:00,2014-08-21 16:00,,2014-06-10 07:00,2014-06-17 17:00,2014-06-10 07:00,2014-06-17 17:00,2014-06-10 07:00,2014-06-17 17:00,2014-08-14 11:00,2014-08-21 16:00,,PT_Normal,,,,,R4DHQojIQrWG8Fn1gRla6g,CDE/W684BEe3zP/gdhvlbQ,,,N,0,0,,,2014-02-17 15:27,2014-03-01 17:09,admin,admin,
1254,128052,6764,35326,6640,0,N,N,N,CP_Drtn,TT_Task,DT_FixedDrtn,TK_NotStart,HHI.1619,"Fit,Weld Nozzle on Shell",,450,0,10,0,0,0,10,0,0,0,,,,2014-08-20 16:00,2014-08-21 16:00,,2014-06-17 07:00,2014-06-17 17:00,2014-06-17 07:00,2014-06-17 17:00,2014-06-17 07:00,2014-06-17 17:00,2014-08-20 16:00,2014-08-21 16:00,,PT_Normal,,,,,QqVZA/PaT7WVxkQMh0UF4g,fbldQ+V3kkeOO57Zn+YcKg,,,N,0,0,,,2014-02-17 15:27,2014-03-01 17:09,admin,admin,
1255,128053,6764,35327,6640,0,N,N,N,CP_Drtn,TT_Task,DT_FixedDrtn,TK_NotStart,HHI.1621,Erect & Tack Shell Course # 5 & Install Stagging Brackets,,450,0,10,0,440,440,10,48,0,48,,,,2014-08-16 16:00,2014-08-17 16:00,,2014-06-12 07:00,2014-06-12 17:00,2014-06-12 07:00,2014-06-12 17:00,2014-06-12 07:00,2014-06-12 17:00,2014-08-16 16:00,2014-08-17 16:00,,PT_Normal,,,,,El7T49fATjWedM6pAScjOQ,XF9HuEqJTk+xMROI85kPMw,,,N,0,0,,,2014-02-17 15:27,2014-03-01 17:09,admin,admin,
1256,128054,6764,35327,6640,0,N,N,N,CP_Drtn,TT_Task,DT_FixedDrtn,TK_NotStart,HHI.1622,Weld Outer Vertical Seam/Install the Stairways support on Shell,,450,0,10,0,160,160,10,33.066667,0,33.066667,,,,2014-08-17 16:00,2014-08-18 16:00,,2014-06-14 07:00,2014-06-14 17:00,2014-06-14 07:00,2014-06-14 17:00,2014-06-14 07:00,2014-06-14 17:00,2014-08-17 16:00,2014-08-18 16:00,,PT_Normal,,,,,B2gVOIbwR8mgx/XnyEN5BQ,ncvS2WJTk0qqD9ZKZbweVg,,,N,0,0,,,2014-02-17 15:27,2014-03-01 17:09,admin,admin,
1257,128055,6764,35327,6640,0,N,N,N,CP_Drtn,TT_Task,DT_FixedDrtn,TK_NotStart,HHI.1623,Backgouge & NDT Inside Vertical Seam,,450,0,10,0,80,80,10,42.666666,0,42.666666,,,,2014-08-18 16:00,2014-08-19 16:00,,2014-06-15 07:00,2014-06-15 17:00,2014-06-15 07:00,2014-06-15 17:00,2014-06-15 07:00,2014-06-15 17:00,2014-08-18 16:00,2014-08-19 16:00,,PT_Normal,,,,,dRrXYZIwThy52R0FITQErA,718hiQ1hQke6kH1IxJaayw,,,N,0,0,,,2014-02-17 15:27,2014-03-01 17:09,admin,admin,
1258,128056,6764,35327,6640,0,N,N,N,CP_Drtn,TT_Task,DT_FixedDrtn,TK_NotStart,HHI.1624,Weld Inside Vertical Seam,,450,0,10,0,167.111111,167.111111,10,33.066667,0,33.066667,,,,2014-08-19 16:00,2014-08-20 16:00,,2014-06-16 07:00,2014-06-16 17:00,2014-06-16 07:00,2014-06-16 17:00,2014-06-16 07:00,2014-06-16 17:00,2014-08-19 16:00,2014-08-20 16:00,,PT_Normal,,,,,90NBWIXQTim4jbKFBSQ1gQ,ox4+y8pN606NC3h0OFzFuw,,,N,0,0,,,2014-02-17 15:27,2014-03-01 17:09,admin,admin,
1259,128057,6764,35327,6640,0,N,N,N,CP_Drtn,TT_Task,DT_FixedDrtn,TK_NotStart,HHI.1625,"""""Weld Outer Horizontal Seam between Shell Course # 4 & 5""""",,450,0,10,0,341.333334,341.333334,10,85.333334,0,85.333334,,,,2014-08-20 16:00,2014-08-21 16:00,,2014-06-17 07:00,2014-06-17 17:00,2014-06-17 07:00,2014-06-17 17:00,2014-06-17 07:00,2014-06-17 17:00,2014-08-20 16:00,2014-08-21 16:00,,PT_Normal,,,,,2iaEyxy2RzeZ4IQgCwFWIQ,qT0/hPfIAU+2BGAaaR3+Dw,,,N,0,0,,,2014-02-17 15:27,2014-03-01 17:09,admin,admin,
1260,128058,6764,35327,6640,0,N,N,N,CP_Drtn,TT_Task,DT_FixedDrtn,TK_NotStart,HHI.1626,"""""Backgouge & NDT Inside Horizontal Seam between Shell Course# 4 & 5""""",,450,0,10,0,108.444444,108.444444,10,33.066667,0,33.066667,,,,2014-08-21 16:00,2014-08-23 11:00,,2014-06-18 07:00,2014-06-18 17:00,2014-06-18 07:00,2014-06-18 17:00,2014-06-18 07:00,2014-06-18 17:00,2014-08-21 16:00,2014-08-23 11:00,,PT_Normal,,,,,O4iqj0FWQKOpQcUWQzn/ag,b8wyDlfYdku5DrbHbeSbVw,,,N,0,0,,,2014-02-17 15:27,2014-03-01 17:09,admin,admin,
1261,128059,6764,35327,6640,0,N,N,N,CP_Drtn,TT_Task,DT_FixedDrtn,TK_NotStart,HHI.1627,"Weld Inner Horizontal Seam between Shell Course #4 & 5""""",,450,0,10,0,405.333336,405.333336,10,85.333333,0,85.333333,,,,2014-08-23 11:00,2014-08-24 11:00,,2014-06-19 07:00,2014-06-19 17:00,2014-06-19 07:00,2014-06-19 17:00,2014-06-19 07:00,2014-06-19 17:00,2014-08-23 11:00,2014-08-24 11:00,,PT_Normal,,,,,6TvED1qJTDGmJZyZJYzdTQ,bIK42eKCGkucxzIK4MdLLw,,,N,0,0,,,2014-02-17 15:27,2014-03-01 17:09,admin,admin,
1262,128060,6764,35327,6640,0,N,N,N,CP_Drtn,TT_Task,DT_FixedDrtn,TK_NotStart,HHI.1629,"Quailty Check(Visual Inspection,PT,Air Leak Test for Shell Nozzle)",,450,0,70,0,55.555555,55.555555,70,33.066667,0,33.066667,,,,2014-08-16 16:00,2014-08-24 11:00,,2014-06-12 07:00,2014-06-19 17:00,2014-06-12 07:00,2014-06-19 17:00,2014-06-12 07:00,2014-06-19 17:00,2014-08-16 16:00,2014-08-24 11:00,,PT_Normal,,,,,ClfZiT8PSr6yW+VWyCGAhw,VhOTqBz2FEW6AF7zy+/IEw,,,N,0,0,,,2014-02-17 15:27,2014-03-01 17:09,admin,admin,
1263,128061,6764,35327,6640,0,N,N,N,CP_Drtn,TT_Task,DT_FixedDrtn,TK_NotStart,HHI.1628,"Fit,Weld Nozzle on Shell",,450,0,10,0,0,0,10,0,0,0,,,,2014-08-23 11:00,2014-08-24 11:00,,2014-06-19 07:00,2014-06-19 17:00,2014-06-19 07:00,2014-06-19 17:00,2014-06-19 07:00,2014-06-19 17:00,2014-08-23 11:00,2014-08-24 11:00,,PT_Normal,,,,,Qk3FKAe2RmOD7uGw19QcvA,fbldQ+V3kkeOO57Zn+YcKg,,,N,0,0,,,2014-02-17 15:27,2014-03-01 17:09,admin,admin,
1264,128062,6764,35328,6640,0,N,N,N,CP_Drtn,TT_Task,DT_FixedDrtn,TK_NotStart,HHI.1630,Perform RT for Tank#1 & #2,,450,0,10,0,0,0,10,0,0,0,,,,2014-08-24 11:00,2014-08-25 11:00,,2014-06-21 07:00,2014-06-21 17:00,2014-06-21 07:00,2014-06-21 17:00,2014-06-21 07:00,2014-06-21 17:00,2014-08-24 11:00,2014-08-25 11:00,,PT_Normal,,,,,b/GJVjKJRcivtQcDJvDJXg,44iK/fYlyUe0fGj/BLD+2w,,,N,0,0,,,2014-02-17 15:27,2014-03-01 17:09,admin,admin,
1265,128063,6764,35330,6640,0,N,N,N,CP_Drtn,TT_Task,DT_FixedDrtn,TK_NotStart,HHI.1577,Erect & Tack Shell Course # 3 & Install Stagging Brackets,,450,0,10,0,560,560,10,48,0,48,,,,2014-07-05 13:00,2014-07-07 11:00,,2014-05-11 07:00,2014-05-11 17:00,2014-05-11 07:00,2014-05-11 17:00,2014-05-11 07:00,2014-05-11 17:00,2014-07-05 13:00,2014-07-07 11:00,,PT_Normal,,,,,2n/ph4zfTbm5KTrIf1Gd3w,0/CCcsAshEaLCdgcd1ZM0A,,,N,0,0,,,2014-02-17 15:27,2014-03-01 17:09,admin,admin,
1266,128064,6764,35330,6640,0,N,N,N,CP_Drtn,TT_Task,DT_FixedDrtn,TK_NotStart,HHI.1578,Weld Outer Vertical Seam/Install the Stairways support on Shell,,450,0,10,0,202.666668,202.666668,10,85.333333,0,85.333333,,,,2014-07-07 11:00,2014-07-08 15:00,,2014-05-12 07:00,2014-05-12 17:00,2014-05-12 07:00,2014-05-12 17:00,2014-05-12 07:00,2014-05-12 17:00,2014-07-07 11:00,2014-07-08 15:00,,PT_Normal,,,,,lRdUoE4tTSKzYX6Fj51jhg,oZgMm3dmYkWkbxSEoYxO8A,,,N,0,0,,,2014-02-17 15:27,2014-03-01 17:09,admin,admin,
1267,128065,6764,35330,6640,0,N,N,N,CP_Drtn,TT_Task,DT_FixedDrtn,TK_NotStart,HHI.1579,Backgouge & NDT Inside Vertical Seam,,450,0,10,0,108.444444,108.444444,10,33.066667,0,33.066667,,,,2014-07-09 09:00,2014-07-10 13:00,,2014-05-13 07:00,2014-05-13 17:00,2014-05-13 07:00,2014-05-13 17:00,2014-05-13 07:00,2014-05-13 17:00,2014-07-09 09:00,2014-07-10 13:00,,PT_Normal,,,,,qwb+WOjoSuSxXjGGigjkhA,mZjxS0xfKUer9EF0EofOAw,,,N,0,0,,,2014-02-17 15:27,2014-03-01 17:09,admin,admin,
1268,128066,6764,35330,6640,0,N,N,N,CP_Drtn,TT_Task,DT_FixedDrtn,TK_NotStart,HHI.1580,Weld Inside Vertical Seam,,450,0,10,0,202.666668,202.666668,10,85.333333,0,85.333333,,,,2014-07-10 13:00,2014-07-13 11:00,,2014-05-14 07:00,2014-05-14 17:00,2014-05-14 07:00,2014-05-14 17:00,2014-05-14 07:00,2014-05-14 17:00,2014-07-10 13:00,2014-07-13 11:00,,PT_Normal,,,,,yBIEqRxSRA6H47QHk4zlsQ,CG9Y20RCu0iCCbvC5fM+Bw,,,N,0,0,,,2014-02-17 15:27,2014-03-01 17:09,admin,admin,
1269,128067,6764,35330,6640,0,N,N,N,CP_Drtn,TT_Task,DT_FixedDrtn,TK_NotStart,HHI.1581,"Weld Outer Horizontal Seam between Shell Course # 2 & 3""""",,450,0,10,0,608,608,10,128,0,128,,,,2014-07-13 11:00,2014-07-14 15:00,,2014-05-15 07:00,2014-05-15 17:00,2014-05-15 07:00,2014-05-15 17:00,2014-05-15 07:00,2014-05-15 17:00,2014-07-13 11:00,2014-07-14 15:00,,PT_Normal,,,,,C2q8W+WBSDWO4sQbkyHHlQ,pfnsIwl6j0yy8Sf5jQfpjQ,,,N,0,0,,,2014-02-17 15:27,2014-03-01 17:09,admin,admin,
1270,128068,6764,35330,6640,0,N,N,N,CP_Drtn,TT_Task,DT_FixedDrtn,TK_NotStart,HHI.1582,"Backgouge & NDT Inside Horizontal Seam between Shell Course# 2 & 3""""",,450,0,10,0,108.444444,108.444444,10,33.066667,0,33.066667,,,,2014-07-15 09:00,2014-07-16 13:00,,2014-05-17 07:00,2014-05-17 17:00,2014-05-17 07:00,2014-05-17 17:00,2014-05-17 07:00,2014-05-17 17:00,2014-07-15 09:00,2014-07-16 13:00,,PT_Normal,,,,,bgG7vJUeSg2s1AXK215zMA,lcQyCh9L9UKbMq2JiHtOOg,,,N,0,0,,,2014-02-17 15:27,2014-03-01 17:09,admin,admin,
1271,128069,6764,35330,6640,0,N,N,N,CP_Drtn,TT_Task,DT_FixedDrtn,TK_NotStart,HHI.1583,"Weld Inner Horizontal Seam between Shell Course # 2 & 3""""",,450,0,10,0,608,608,10,128,0,128,,,,2014-07-16 13:00,2014-07-19 11:00,,2014-05-18 07:00,2014-05-18 17:00,2014-05-18 07:00,2014-05-18 17:00,2014-05-18 07:00,2014-05-18 17:00,2014-07-16 13:00,2014-07-19 11:00,,PT_Normal,,,,,5OoaRu7GQ3qoNqrvqI48PA,oVpCtP9DGEWc6UgoNsROCg,,,N,0,0,,,2014-02-17 15:27,2014-03-01 17:09,admin,admin,
1272,128070,6764,35330,6640,0,N,N,N,CP_Drtn,TT_Task,DT_FixedDrtn,TK_NotStart,HHI.1584,Quailty Check(Visual Inspection),,450,0,70,0,32,32,70,42.666666,0,42.666666,,,,2014-07-05 13:00,2014-07-19 11:00,,2014-05-11 07:00,2014-05-18 17:00,2014-05-11 07:00,2014-05-18 17:00,2014-05-11 07:00,2014-05-18 17:00,2014-07-05 13:00,2014-07-19 11:00,,PT_Normal,,,,,1GsiHxdyTtm3S2cq1CXXXg,kcAJTdCoA0yVnpjEkpuokQ,,,N,0,0,,,2014-02-17 15:27,2014-03-01 17:09,admin,admin,
1273,128071,6764,35331,6640,0,N,N,N,CP_Drtn,TT_Task,DT_FixedDrtn,TK_NotStart,HHI.1585,Perform RT for Tank#1 & #2,,450,0,10,0,0,0,10,0,0,0,,,,2014-07-19 11:00,2014-07-20 15:00,,2014-05-19 07:00,2014-05-19 17:00,2014-05-19 07:00,2014-05-19 17:00,2014-05-19 07:00,2014-05-19 17:00,2014-07-19 11:00,2014-07-20 15:00,,PT_Normal,,,,,HkxPPOzyQa6vo/aIT862wA,vpaxtpm4CUalH3jbo2w8sw,,,N,0,0,,,2014-02-17 15:27,2014-03-01 17:09,admin,admin,
1274,128072,6764,35332,6640,0,N,N,N,CP_Drtn,TT_Task,DT_FixedDrtn,TK_NotStart,HHI.1569,Erect & Tack Shell Course # 3 & Install Stagging Brackets,,450,0,10,0,500,500,10,48,0,48,,,,2014-07-01 11:00,2014-07-02 15:00,,2014-05-08 07:00,2014-05-08 17:00,2014-05-08 07:00,2014-05-08 17:00,2014-05-08 07:00,2014-05-08 17:00,2014-07-01 11:00,2014-07-02 15:00,,PT_Normal,,,,,qLPzyL6pThC+AzRgPVTKSw,PX/xdotAYE2zLaP3gObeRA,,,N,0,0,,,2014-02-17 15:27,2014-03-01 17:09,admin,admin,
1275,128073,6764,35332,6640,0,N,N,N,CP_Drtn,TT_Task,DT_FixedDrtn,TK_NotStart,HHI.1570,Weld Outer Vertical Seam/Install the Stairways support on Shell,,450,0,10,0,160,160,10,85.333334,0,85.333334,,,,2014-07-03 09:00,2014-07-05 13:00,,2014-05-10 07:00,2014-05-10 17:00,2014-05-10 07:00,2014-05-10 17:00,2014-05-10 07:00,2014-05-10 17:00,2014-07-03 09:00,2014-07-05 13:00,,PT_Normal,,,,,/hrGxh/7Sj6akIo4fvb3Sg,kVsvPPuzI02s1bfGioP8Cw,,,N,0,0,,,2014-02-17 15:27,2014-03-01 17:09,admin,admin,
1276,128074,6764,35332,6640,0,N,N,N,CP_Drtn,TT_Task,DT_FixedDrtn,TK_NotStart,HHI.1571,Backgouge & NDT Inside Vertical Seam,,450,0,10,0,80,80,10,33.066667,0,33.066667,,,,2014-07-05 13:00,2014-07-07 11:00,,2014-05-11 07:00,2014-05-11 17:00,2014-05-11 07:00,2014-05-11 17:00,2014-05-11 07:00,2014-05-11 17:00,2014-07-05 13:00,2014-07-07 11:00,,PT_Normal,,,,,VVHT0NJOTVSaNn0TDMO0hg,G9Qry2CzGkeQ/WW51odXRQ,,,N,0,0,,,2014-02-17 15:27,2014-03-01 17:09,admin,admin,
1277,128075,6764,35332,6640,0,N,N,N,CP_Drtn,TT_Task,DT_FixedDrtn,TK_NotStart,HHI.1572,Weld Inside Vertical Seam,,450,0,10,0,202.666668,202.666668,10,85.333333,0,85.333333,,,,2014-07-07 11:00,2014-07-08 15:00,,2014-05-12 07:00,2014-05-12 17:00,2014-05-12 07:00,2014-05-12 17:00,2014-05-12 07:00,2014-05-12 17:00,2014-07-07 11:00,2014-07-08 15:00,,PT_Normal,,,,,PJAXbg3VS/28/5vhbB8FcQ,8f6GAWWn90OiHGU60PSL7Q,,,N,0,0,,,2014-02-17 15:27,2014-03-01 17:09,admin,admin,
1278,128076,6764,35332,6640,0,N,N,N,CP_Drtn,TT_Task,DT_FixedDrtn,TK_NotStart,HHI.1573,"Weld Outer Horizontal Seam between Shell Course # 2 & 3""""",,450,0,10,0,608,608,10,128,0,128,,,,2014-07-09 09:00,2014-07-10 13:00,,2014-05-13 07:00,2014-05-13 17:00,2014-05-13 07:00,2014-05-13 17:00,2014-05-13 07:00,2014-05-13 17:00,2014-07-09 09:00,2014-07-10 13:00,,PT_Normal,,,,,QIFuomkYRtWK6I38q3erNQ,xDwB60Z2AE64RUPBogOCxA,,,N,0,0,,,2014-02-17 15:27,2014-03-01 17:09,admin,admin,
1279,128077,6764,35332,6640,0,N,N,N,CP_Drtn,TT_Task,DT_FixedDrtn,TK_NotStart,HHI.1574,"Backgouge & NDT Inside Horizontal Seam between Shell Course# 2 & 3""""",,450,0,10,0,87.111111,87.111111,10,33.066667,0,33.066667,,,,2014-07-10 13:00,2014-07-13 11:00,,2014-05-14 07:00,2014-05-14 17:00,2014-05-14 07:00,2014-05-14 17:00,2014-05-14 07:00,2014-05-14 17:00,2014-07-10 13:00,2014-07-13 11:00,,PT_Normal,,,,,87ryLWXiRneCNfIEMv3FEA,UFhrPthHLUWBk+jtQcbArA,,,N,0,0,,,2014-02-17 15:27,2014-03-01 17:09,admin,admin,
1280,128078,6764,35332,6640,0,N,N,N,CP_Drtn,TT_Task,DT_FixedDrtn,TK_NotStart,HHI.1575,"Weld Inner Horizontal Seam between Shell Course # 2 & 3""""",,450,0,10,0,608,608,10,128,0,128,,,,2014-07-13 11:00,2014-07-14 15:00,,2014-05-15 07:00,2014-05-15 17:00,2014-05-15 07:00,2014-05-15 17:00,2014-05-15 07:00,2014-05-15 17:00,2014-07-13 11:00,2014-07-14 15:00,,PT_Normal,,,,,UwXGLCEMRwWWju/CHH1XJA,O5bCE08y2Eq+Ab8iDoSmHQ,,,N,0,0,,,2014-02-17 15:27,2014-03-01 17:09,admin,admin,
1281,128079,6764,35332,6640,0,N,N,N,CP_Drtn,TT_Task,DT_FixedDrtn,TK_NotStart,HHI.1576,Quailty Check(Visual Inspection),,450,0,70,0,27.111111,27.111111,70,33.066667,0,33.066667,,,,2014-07-01 11:00,2014-07-14 15:00,,2014-05-08 07:00,2014-05-15 17:00,2014-05-08 07:00,2014-05-15 17:00,2014-05-08 07:00,2014-05-15 17:00,2014-07-01 11:00,2014-07-14 15:00,,PT_Normal,,,,,xoScmiChQnKA/14JrhFRdQ,Zy1dxDyAIUeZCXRyHB0HlQ,,,N,0,0,,,2014-02-17 15:27,2014-03-01 17:09,admin,admin,
1282,128080,6764,35334,6640,0,N,N,N,CP_Drtn,TT_Task,DT_FixedDrtn,TK_NotStart,HHI.1586,Erect & Tack Shell Course # 4 & Install Stagging Brackets,,450,0,10,0,480,480,10,48,0,48,,,,2014-07-19 11:00,2014-07-20 15:00,,2014-05-19 07:00,2014-05-19 17:00,2014-05-19 07:00,2014-05-19 17:00,2014-05-19 07:00,2014-05-19 17:00,2014-07-19 11:00,2014-07-20 15:00,,PT_Normal,,,,,9HNAQxRUTYeTfmjD0UsyDQ,8JgC/cC7wU+s+DH7ET9/gQ,,,N,0,0,,,2014-02-17 15:27,2014-03-01 17:09,admin,admin,
1283,128081,6764,35334,6640,0,N,N,N,CP_Drtn,TT_Task,DT_FixedDrtn,TK_NotStart,HHI.1587,Weld Outer Vertical Seam/Install the Stairways support on Shell,,450,0,10,0,160,160,10,85.333334,0,85.333334,,,,2014-07-21 09:00,2014-07-22 13:00,,2014-05-20 07:00,2014-05-20 17:00,2014-05-20 07:00,2014-05-20 17:00,2014-05-20 07:00,2014-05-20 17:00,2014-07-21 09:00,2014-07-22 13:00,,PT_Normal,,,,,bot1ZqdJRo+rCqekBcSFLQ,2HUPhNZBpkG0qZLxbVb8tQ,,,N,0,0,,,2014-02-17 15:27,2014-03-01 17:09,admin,admin,
1284,128082,6764,35334,6640,0,N,N,N,CP_Drtn,TT_Task,DT_FixedDrtn,TK_NotStart,HHI.1588,Backgouge & NDT Inside Vertical Seam,,450,0,10,0,80,80,10,33.066667,0,33.066667,,,,2014-07-22 13:00,2014-07-24 11:00,,2014-05-21 07:00,2014-05-21 17:00,2014-05-21 07:00,2014-05-21 17:00,2014-05-21 07:00,2014-05-21 17:00,2014-07-22 13:00,2014-07-24 11:00,,PT_Normal,,,,,ouzZq0NjQwCQl7V2Dd+fJA,MLt2TKWfR0W/lkjsM642Sg,,,N,0,0,,,2014-02-17 15:27,2014-03-01 17:09,admin,admin,
1285,128083,6764,35334,6640,0,N,N,N,CP_Drtn,TT_Task,DT_FixedDrtn,TK_NotStart,HHI.1589,Weld Inside Vertical Seam,,450,0,10,0,202.666668,202.666668,10,85.333333,0,85.333333,,,,2014-07-24 11:00,2014-07-26 15:00,,2014-05-22 07:00,2014-05-22 17:00,2014-05-22 07:00,2014-05-22 17:00,2014-05-22 07:00,2014-05-22 17:00,2014-07-24 11:00,2014-07-26 15:00,,PT_Normal,,,,,KqVahidjRLKbMo7jUDjS+A,UjY8tqqcBU2ge0O0s6aVrw,,,N,0,0,,,2014-02-17 15:27,2014-03-01 17:09,admin,admin,
1286,128084,6764,35334,6640,0,N,N,N,CP_Drtn,TT_Task,DT_FixedDrtn,TK_NotStart,HHI.1590,"Weld Outer Horizontal Seam between Shell Course # 3 & 4""""",,450,0,10,0,388.266664,388.266664,10,72.96,0,72.96,,,,2014-07-27 09:00,2014-07-30 11:00,,2014-05-24 07:00,2014-05-24 17:00,2014-05-24 07:00,2014-05-24 17:00,2014-05-24 07:00,2014-05-24 17:00,2014-07-27 09:00,2014-07-30 11:00,,PT_Normal,,,,,q1Wk6rgIQRm4U1Ir+DJqhw,GE0uWmr3sEWUKSMPOq/HYA,,,N,0,0,,,2014-02-17 15:27,2014-03-01 17:09,admin,admin,
1287,128085,6764,35334,6640,0,N,N,N,CP_Drtn,TT_Task,DT_FixedDrtn,TK_NotStart,HHI.1591,"Backgouge & NDT Inside Horizontal Seam between Shell Course# 3 & 4""""",,450,0,10,0,101.333333,101.333333,10,33.066667,0,33.066667,,,,2014-07-30 11:00,2014-07-31 11:00,,2014-05-25 07:00,2014-05-25 17:00,2014-05-25 07:00,2014-05-25 17:00,2014-05-25 07:00,2014-05-25 17:00,2014-07-30 11:00,2014-07-31 11:00,,PT_Normal,,,,,gPlE79hnRiSyXnWZijtzXg,gbTaxz322U6+hB4xBXL1Yw,,,N,0,0,,,2014-02-17 15:27,2014-03-01 17:09,admin,admin,
1288,128086,6764,35334,6640,0,N,N,N,CP_Drtn,TT_Task,DT_FixedDrtn,TK_NotStart,HHI.1592,"Weld Inner Horizontal Seam between Shell Course # 3 & 4""""",,450,0,10,0,388.266664,388.266664,10,72.96,0,72.96,,,,2014-07-31 11:00,2014-08-01 13:30,,2014-05-26 07:00,2014-05-26 17:00,2014-05-26 07:00,2014-05-26 17:00,2014-05-26 07:00,2014-05-26 17:00,2014-07-31 11:00,2014-08-01 13:30,,PT_Normal,,,,,76J1qONmRPCr262zPGyucA,rFeVSk2DE02pBDtWOixcRA,,,N,0,0,,,2014-02-17 15:27,2014-03-01 17:09,admin,admin,
1289,128087,6764,35334,6640,0,N,N,N,CP_Drtn,TT_Task,DT_FixedDrtn,TK_NotStart,HHI.1594,"Quailty Check(Visual Inspection,PT,Air Leak Test for Shell Nozzle)",,450,0,70,0,34.222222,34.222222,70,33.066667,0,33.066667,,,,2014-07-19 11:00,2014-08-01 13:30,,2014-05-19 07:00,2014-05-26 17:00,2014-05-19 07:00,2014-05-26 17:00,2014-05-19 07:00,2014-05-26 17:00,2014-07-19 11:00,2014-08-01 13:30,,PT_Normal,,,,,JASLJNOWSLGLzwck7T36Tw,2j01wJTXhUC/6XPx0lG68A,,,N,0,0,,,2014-02-17 15:27,2014-03-01 17:09,admin,admin,
1290,128088,6764,35334,6640,0,N,N,N,CP_Drtn,TT_Task,DT_FixedDrtn,TK_NotStart,HHI.1593,"Fit,Weld Nozzle on Shell",,450,0,10,0,0,0,10,0,0,0,,,,2014-07-31 11:00,2014-08-01 13:30,,2014-05-26 07:00,2014-05-26 17:00,2014-05-26 07:00,2014-05-26 17:00,2014-05-26 07:00,2014-05-26 17:00,2014-07-31 11:00,2014-08-01 13:30,,PT_Normal,,,,,QwccIJ7wRE6O9KVLDsSJsQ,,,,N,0,0,,,2014-02-17 15:27,2014-03-01 17:09,admin,admin,
1291,128089,6764,35335,6640,0,N,N,N,CP_Drtn,TT_Task,DT_FixedDrtn,TK_NotStart,HHI.1599,Erect & Tack Shell Course # 4 & Install Stagging Brackets,,450,0,10,0,560,560,10,48,0,48,,,,2014-08-03 16:00,2014-08-04 16:00,,2014-05-29 07:00,2014-05-29 17:00,2014-05-29 07:00,2014-05-29 17:00,2014-05-29 07:00,2014-05-29 17:00,2014-08-03 16:00,2014-08-04 16:00,,PT_Normal,,,,,HrvPg1o+StyDosX8roxU0g,IG7Y3prRiUW94aX3DDYlmQ,,,N,0,0,,,2014-02-17 15:27,2014-03-01 17:09,admin,admin,
1292,128090,6764,35335,6640,0,N,N,N,CP_Drtn,TT_Task,DT_FixedDrtn,TK_NotStart,HHI.1600,Weld Outer Vertical Seam/Install the Stairways support on Shell,,450,0,10,0,192.000001,192.000001,10,85.333334,0,85.333334,,,,2014-08-04 16:00,2014-08-05 16:00,,2014-05-31 07:00,2014-05-31 17:00,2014-05-31 07:00,2014-05-31 17:00,2014-05-31 07:00,2014-05-31 17:00,2014-08-04 16:00,2014-08-05 16:00,,PT_Normal,,,,,4wDJffj6RaCLfUAewSyI9w,twK7yaifCUOAebnS7QrdAg,,,N,0,0,,,2014-02-17 15:27,2014-03-01 17:09,admin,admin,
1293,128091,6764,35335,6640,0,N,N,N,CP_Drtn,TT_Task,DT_FixedDrtn,TK_NotStart,HHI.1601,Backgouge & NDT Inside Vertical Seam,,450,0,10,0,101.333333,101.333333,10,33.066667,0,33.066667,,,,2014-08-05 16:00,2014-08-06 16:00,,2014-06-01 07:00,2014-06-01 17:00,2014-06-01 07:00,2014-06-01 17:00,2014-06-01 07:00,2014-06-01 17:00,2014-08-05 16:00,2014-08-06 16:00,,PT_Normal,,,,,hX8TKPJBRmCgJ+ABWqJIHQ,83pBpMu5mEK22c0+zuRg5A,,,N,0,0,,,2014-02-17 15:27,2014-03-01 17:09,admin,admin,
1294,128092,6764,35335,6640,0,N,N,N,CP_Drtn,TT_Task,DT_FixedDrtn,TK_NotStart,HHI.1602,Weld Inside Vertical Seam,,450,0,10,0,202.666668,202.666668,10,85.333333,0,85.333333,,,,2014-08-06 16:00,2014-08-07 16:00,,2014-06-02 07:00,2014-06-02 17:00,2014-06-02 07:00,2014-06-02 17:00,2014-06-02 07:00,2014-06-02 17:00,2014-08-06 16:00,2014-08-07 16:00,,PT_Normal,,,,,7aieI1kmTNa/lqHWICZqTw,62kh+Bgm5ESg43Asc2nYWA,,,N,0,0,,,2014-02-17 15:27,2014-03-01 17:09,admin,admin,
1295,128093,6764,35335,6640,0,N,N,N,CP_Drtn,TT_Task,DT_FixedDrtn,TK_NotStart,HHI.1603,"Weld Outer Horizontal Seam between Shell Course # 3 & 4""""",,450,0,10,0,405.333332,405.333332,10,128,0,128,,,,2014-08-07 16:00,2014-08-09 11:00,,2014-06-03 07:00,2014-06-03 17:00,2014-06-03 07:00,2014-06-03 17:00,2014-06-03 07:00,2014-06-03 17:00,2014-08-07 16:00,2014-08-09 11:00,,PT_Normal,,,,,gxQmjjwFRwCTxge6x35npA,N0JewsEndkCfRFtRRCt6sA,,,N,0,0,,,2014-02-17 15:27,2014-03-01 17:09,admin,admin,
1296,128094,6764,35335,6640,0,N,N,N,CP_Drtn,TT_Task,DT_FixedDrtn,TK_NotStart,HHI.1604,"Backgouge & NDT Inside Horizontal Seam between Shell Course# 3 & 4""""",,450,0,10,0,94.222222,94.222222,10,33.066667,0,33.066667,,,,2014-08-09 11:00,2014-08-10 11:00,,2014-06-04 07:00,2014-06-04 17:00,2014-06-04 07:00,2014-06-04 17:00,2014-06-04 07:00,2014-06-04 17:00,2014-08-09 11:00,2014-08-10 11:00,,PT_Normal,,,,,VSWKiaiMRrWZmPy0QO43zQ,0XVe2w2zIUSm6q5Oq4tAwA,,,N,0,0,,,2014-02-17 15:27,2014-03-01 17:09,admin,admin,
1297,128095,6764,35335,6640,0,N,N,N,CP_Drtn,TT_Task,DT_FixedDrtn,TK_NotStart,HHI.1605,"Weld Inner Horizontal Seam between Shell Course # 3 & 4""""",,450,0,10,0,405.333332,405.333332,10,128,0,128,,,,2014-08-10 11:00,2014-08-11 11:00,,2014-06-05 07:00,2014-06-05 17:00,2014-06-05 07:00,2014-06-05 17:00,2014-06-05 07:00,2014-06-05 17:00,2014-08-10 11:00,2014-08-11 11:00,,PT_Normal,,,,,t0GSZr6CTgGJI9vXxYDTkg,XeR5RMnt4kKNByzzbBAofA,,,N,0,0,,,2014-02-17 15:27,2014-03-01 17:09,admin,admin,
1298,128096,6764,35335,6640,0,N,N,N,CP_Drtn,TT_Task,DT_FixedDrtn,TK_NotStart,HHI.1607,"Quailty Check(Visual Inspection,PT,Air Leak Test for Shell Nozzle)",,450,0,70,0,48.444444,48.444444,70,33.066667,0,33.066667,,,,2014-08-03 16:00,2014-08-11 11:00,,2014-05-29 07:00,2014-06-05 17:00,2014-05-29 07:00,2014-06-05 17:00,2014-05-29 07:00,2014-06-05 17:00,2014-08-03 16:00,2014-08-11 11:00,,PT_Normal,,,,,EIiDH0i/Qseuvevnw7azVg,bdkUj2TMnki2pgsUawtDtw,,,N,0,0,,,2014-02-17 15:27,2014-03-01 17:09,admin,admin,
1299,128097,6764,35335,6640,0,N,N,N,CP_Drtn,TT_Task,DT_FixedDrtn,TK_NotStart,HHI.1606,"Fit,Weld Nozzle on Shell",,450,0,10,0,0,0,10,0,0,0,,,,2014-08-10 11:00,2014-08-11 11:00,,2014-06-05 07:00,2014-06-05 17:00,2014-06-05 07:00,2014-06-05 17:00,2014-06-05 07:00,2014-06-05 17:00,2014-08-10 11:00,2014-08-11 11:00,,PT_Normal,,,,,aF5si1IYQ7aMI0uJQEliyA,+J71crjBuEuAjRwNHXwkeA,,,N,0,0,,,2014-02-17 15:27,2014-03-01 17:09,admin,admin,
1300,128098,6764,35336,6640,0,N,N,N,CP_Drtn,TT_Task,DT_FixedDrtn,TK_NotStart,HHI.1611,Perform RT for Tank#1 & #2,,450,0,10,0,0,0,10,0,0,0,,,,2014-08-14 11:00,2014-08-15 13:30,,2014-06-10 07:00,2014-06-10 17:00,2014-06-10 07:00,2014-06-10 17:00,2014-06-10 07:00,2014-06-10 17:00,2014-08-14 11:00,2014-08-15 13:30,,PT_Normal,,,,,mrKwCB4/TvCmbbatnHMXNw,cBwKtAx2Gkmkm3Q8Ukhy9A,,,N,0,0,,,2014-02-17 15:27,2014-03-01 17:09,admin,admin,
1301,128099,6764,35337,6640,0,N,N,N,CP_Drtn,TT_Task,DT_FixedDrtn,TK_NotStart,HHI.1596,Erect & Tack Wind Girder,,450,0,10,0,276.888892,276.888892,10,11.377778,0,11.377778,,,,2014-08-01 13:30,2014-08-02 16:00,,2014-05-27 07:00,2014-05-27 17:00,2014-05-27 07:00,2014-05-27 17:00,2014-05-27 07:00,2014-05-27 17:00,2014-08-01 13:30,2014-08-02 16:00,,PT_Normal,,,,,vaACqJAsRaenpj7av8ndUA,z4VOO5JblE2DKRx7Y0A6wQ,,,N,0,0,,,2014-02-17 15:27,2014-03-01 17:09,admin,admin,
1302,128100,6764,35337,6640,0,N,N,N,CP_Drtn,TT_Task,DT_FixedDrtn,TK_NotStart,HHI.1597,Weld Wind Girder,,450,0,20,0,608.000004,608.000004,20,85.333333,0,85.333333,,,,2014-08-02 16:00,2014-08-04 16:00,,2014-05-28 07:00,2014-05-29 17:00,2014-05-28 07:00,2014-05-29 17:00,2014-05-28 07:00,2014-05-29 17:00,2014-08-02 16:00,2014-08-04 16:00,,PT_Normal,,,,,V2oJfaFaRZmfZZafNQXaeg,j7sjrND8+kOLbNmf0mDA4Q,,,N,0,0,,,2014-02-17 15:27,2014-03-01 17:09,admin,admin,
1303,128101,6764,35337,6640,0,N,N,N,CP_Drtn,TT_Task,DT_FixedDrtn,TK_NotStart,HHI.1598,Quailty Check(Visual Inspection & PT),,450,0,30,0,0,0,30,0,0,0,,,,2014-08-01 13:30,2014-08-04 16:00,,2014-05-27 07:00,2014-05-29 17:00,2014-05-27 07:00,2014-05-29 17:00,2014-05-27 07:00,2014-05-29 17:00,2014-08-01 13:30,2014-08-04 16:00,,PT_Normal,,,,,QnIQaIBMRJ2tFP1Rk9mQPA,PhEmXEUenk2y8ZZBsDP16Q,,,N,0,0,,,2014-02-17 15:27,2014-03-01 17:09,admin,admin,
1304,128102,6764,35338,6640,0,N,N,N,CP_Drtn,TT_Task,DT_FixedDrtn,TK_NotStart,HHI.1608,Erect & Tack Wind Girder,,450,0,10,0,276.888892,276.888892,10,11.377778,0,11.377778,,,,2014-08-11 11:00,2014-08-12 11:00,,2014-06-07 07:00,2014-06-07 17:00,2014-06-07 07:00,2014-06-07 17:00,2014-06-07 07:00,2014-06-07 17:00,2014-08-11 11:00,2014-08-12 11:00,,PT_Normal,,,,,FRN+nmH4RouxLz0CGTTJag,XuyUIgqmHUuk00STyqEGGA,,,N,0,0,,,2014-02-17 15:27,2014-03-01 17:09,admin,admin,
1305,128103,6764,35338,6640,0,N,N,N,CP_Drtn,TT_Task,DT_FixedDrtn,TK_NotStart,HHI.1609,Weld Wind Girder,,450,0,20,0,608.000004,608.000004,20,85.333333,0,85.333333,,,,2014-08-12 11:00,2014-08-14 11:00,,2014-06-08 07:00,2014-06-09 17:00,2014-06-08 07:00,2014-06-09 17:00,2014-06-08 07:00,2014-06-09 17:00,2014-08-12 11:00,2014-08-14 11:00,,PT_Normal,,,,,yuwh6zE8RDuojvoNo7LEVQ,1LZqRJ8/iUixaC28SM95gg,,,N,0,0,,,2014-02-17 15:27,2014-03-01 17:09,admin,admin,
1306,128104,6764,35338,6640,0,N,N,N,CP_Drtn,TT_Task,DT_FixedDrtn,TK_NotStart,HHI.1610,Quailty Check(Visual Inspection & PT),,450,0,30,0,0,0,30,0,0,0,,,,2014-08-11 11:00,2014-08-14 11:00,,2014-06-07 07:00,2014-06-09 17:00,2014-06-07 07:00,2014-06-09 17:00,2014-06-07 07:00,2014-06-09 17:00,2014-08-11 11:00,2014-08-14 11:00,,PT_Normal,,,,,LdERN8SBSLef0sBK0741iw,D9bfFAE0I0e9+CmUPFyg3w,,,N,0,0,,,2014-02-17 15:27,2014-03-01 17:09,admin,admin,
1307,128105,6764,35340,6640,0,N,N,N,CP_Drtn,TT_Task,DT_FixedDrtn,TK_NotStart,HHI.1702,"""""Fit & Tack 
Shell Course # 8 & Compression Ring",,450,0,20,0,255.999999,255.999999,20,8.533333,0,8.533333,,,,2014-10-23 16:00,2014-10-26 16:00,,2014-08-30 16:00,2014-09-01 16:00,2014-08-30 16:00,2014-09-01 16:00,2014-08-30 16:00,2014-09-01 16:00,2014-10-23 16:00,2014-10-26 16:00,,PT_Normal,,,,,RQ2YNlGRTmOGnqCDNdIK2Q,H2gngmQNBU+iDcaywCR70Q,,,N,0,0,,,2014-02-17 15:27,2014-03-01 17:09,admin,admin,
1308,128106,6764,35340,6640,0,N,N,N,CP_Drtn,TT_Task,DT_FixedDrtn,TK_NotStart,HHI.1703,Weld Outer Horizontal Seam between Shell Course # 8 & Top Curb Angle,,460,0,10,0,128,128,10,33.066667,0,33.066667,,,,2014-10-27 16:00,2014-10-28 16:00,,2014-09-01 16:00,2014-09-02 16:00,2014-09-01 16:00,2014-09-02 16:00,2014-09-01 16:00,2014-09-02 16:00,2014-10-27 16:00,2014-10-28 16:00,,PT_Normal,,,,,mgdgNg85QtikKhND30PioA,+FJY9N2ikU+kT82xwA8row,,,N,0,0,,,2014-02-17 15:27,2014-03-01 17:09,admin,admin,
1309,128107,6764,35340,6640,0,N,N,N,CP_Drtn,TT_Task,DT_FixedDrtn,TK_NotStart,HHI.1704,"""""Backgouge & NDT Inside Horizontal Seam between Shell Course# 8 & Top Curb Angle",,460,10,10,0,90,90,10,33.066667,0,33.066667,,,,2014-10-27 16:00,2014-10-28 16:00,,2014-09-01 16:00,2014-09-02 16:00,2014-09-01 16:00,2014-09-02 16:00,2014-09-01 16:00,2014-09-02 16:00,2014-10-27 16:00,2014-10-28 16:00,,PT_Normal,,,,,maFWgE7SRsaXuMKY9abOyw,zyqYVfQo/kuV9BC+v3OBrg,,,N,0,0,,,2014-02-17 15:27,2014-03-01 17:09,admin,admin,
1310,128108,6764,35340,6640,0,N,N,N,CP_Drtn,TT_Task,DT_FixedDrtn,TK_NotStart,HHI.1706,Weld Inner Horizontal Seam between Shell Course #8 & Top Curb Angle,,450,0,10,0,191.333334,191.333334,10,33.066667,0,33.066667,,,,2014-10-28 16:00,2014-10-29 16:00,,2014-09-03 16:00,2014-09-04 16:00,2014-09-03 16:00,2014-09-04 16:00,2014-09-03 16:00,2014-09-04 16:00,2014-10-28 16:00,2014-10-29 16:00,,PT_Normal,,,,,NzDBfC3iTvGISwgLI/GhHQ,AWA8Ku2O20WDeDw1+dR2XA,,,N,0,0,,,2014-02-17 15:27,2014-03-01 17:09,admin,admin,
1311,128109,6764,35340,6640,0,N,N,N,CP_Drtn,TT_Task,DT_FixedDrtn,TK_NotStart,HHI.1708,Quailty Check (Visual Inspection),,450,0,50,0,42.666664,42.666664,50,42.666667,0,42.666667,,,,2014-10-23 16:00,2014-10-29 16:00,,2014-08-30 16:00,2014-09-04 16:00,2014-08-30 16:00,2014-09-04 16:00,2014-08-30 16:00,2014-09-04 16:00,2014-10-23 16:00,2014-10-29 16:00,,PT_Normal,,,,,RBNWPjr7Tz2b5B1Rh7TPxA,MFfGwUAWiE6B31C5qir93A,,,N,0,0,,,2014-02-17 15:27,2014-03-01 17:09,admin,admin,
1312,128110,6764,35340,6640,0,N,N,N,CP_Drtn,TT_Task,DT_FixedDrtn,TK_NotStart,HHI.1705,"Fit up,Tack of Gusset Plates to Shell",,450,0,20,0,341.333337,341.333337,20,17.066667,0,17.066667,,,,2014-10-26 16:00,2014-10-28 16:00,,2014-09-01 16:00,2014-09-03 16:00,2014-09-01 16:00,2014-09-03 16:00,2014-09-01 16:00,2014-09-03 16:00,2014-10-26 16:00,2014-10-28 16:00,,PT_Normal,,,,,KnRoE/r1Sf+sU44zsQSEWw,sEwCGvLXmkCia90qTBeyHA,,,N,0,0,,,2014-02-17 15:27,2014-03-01 17:09,admin,admin,
1313,128111,6764,35340,6640,0,N,N,N,CP_Drtn,TT_Task,DT_FixedDrtn,TK_NotStart,HHI.1707,Welding of Gusset Plates,,450,0,10,0,202.666668,202.666668,10,85.333333,0,85.333333,,,,2014-10-28 16:00,2014-10-29 16:00,,2014-09-03 16:00,2014-09-04 16:00,2014-09-03 16:00,2014-09-04 16:00,2014-09-03 16:00,2014-09-04 16:00,2014-10-28 16:00,2014-10-29 16:00,,PT_Normal,,,,,EU4N8ESlT9CWVBztWqOotA,lND6a1AsqUKsWySfF3C9tg,,,N,0,0,,,2014-02-17 15:27,2014-03-01 17:09,admin,admin,
1314,128112,6764,35341,6640,0,N,N,N,CP_Drtn,TT_Task,DT_FixedDrtn,TK_NotStart,HHI.1709,"Erect,Laydown & install Girders to Columns (1 Layers ,5 Girders)",,450,0,20,0,341.333331,341.333331,20,17.066666,0,17.066666,,,,2014-10-26 16:00,2014-10-28 16:00,,2014-09-01 16:00,2014-09-03 16:00,2014-09-01 16:00,2014-09-03 16:00,2014-09-01 16:00,2014-09-03 16:00,2014-10-26 16:00,2014-10-28 16:00,,PT_Normal,,,,,DTGmosheRwCBzh+LwHixQw,BENsB2dkjEKUUJ8n799kjw,,,N,0,0,,,2014-02-17 15:27,2014-03-01 17:09,admin,admin,
1315,128113,6764,35342,6640,0,N,N,N,CP_Drtn,TT_Task,DT_FixedDrtn,TK_NotStart,HHI.1710,"Erect,Lay Down & Install the Rafters (75 Rafters)/ Install Internal Piping Brackets/Piping",,450,0,50,0,1343.999994,1343.999994,50,17.066666,0,17.066666,,,,2014-10-27 16:00,2014-11-02 16:00,,2014-09-02 16:00,2014-09-08 11:00,2014-09-02 16:00,2014-09-08 11:00,2014-09-02 16:00,2014-09-08 11:00,2014-10-27 16:00,2014-11-02 16:00,,PT_Normal,,,,,Ut3iUoaqTQmmVGOci0hIDQ,4fs8MXMkpEyKkF/EGhwx0A,,,N,0,0,,,2014-02-17 15:27,2014-03-01 17:09,admin,admin,
1316,128114,6764,35343,6640,0,N,N,N,CP_Drtn,TT_Task,DT_FixedDrtn,TK_NotStart,HHI.1711,Prepare/Lay Down Roof Plates (27 Plates),,450,0,20,0,864.000004,864.000004,20,17.066667,0,17.066667,,,,2014-10-30 16:00,2014-11-02 16:00,,2014-09-06 11:00,2014-09-08 11:00,2014-09-06 11:00,2014-09-08 11:00,2014-09-06 11:00,2014-09-08 11:00,2014-10-30 16:00,2014-11-02 16:00,,PT_Normal,,,,,volCCh71TM2YgX1SZq6k/w,GHotb4VXN0eTkYwNbgzdNQ,,,N,0,0,,,2014-02-17 15:27,2014-03-01 17:09,admin,admin,
1317,128115,6764,35343,6640,0,N,N,N,CP_Drtn,TT_Task,DT_FixedDrtn,TK_NotStart,HHI.1712,Tacking of Roof Plates,,450,0,20,0,968,968,20,0,0,0,,,,2014-10-30 16:00,2014-11-02 16:00,,2014-09-06 11:00,2014-09-08 11:00,2014-09-06 11:00,2014-09-08 11:00,2014-09-06 11:00,2014-09-08 11:00,2014-10-30 16:00,2014-11-02 16:00,,PT_Normal,,,,,tioDaFZVT8GE4HO5C8g78Q,kUn1E4ywPUq3w/UUNU1gow,,,N,0,0,,,2014-02-17 15:27,2014-03-01 17:09,admin,admin,
1318,128116,6764,35343,6640,0,N,N,N,CP_Drtn,TT_Task,DT_FixedDrtn,TK_NotStart,HHI.1713,Welding of Roof Plates (Short Seams),,450,0,20,0,544,544,20,128,0,128,,,,2014-11-02 16:00,2014-11-04 16:00,,2014-09-08 11:00,2014-09-10 11:00,2014-09-08 11:00,2014-09-10 11:00,2014-09-08 11:00,2014-09-10 11:00,2014-11-02 16:00,2014-11-04 16:00,,PT_Normal,,,,,Od9TsiMuTreLrO+eLK3zDg,8SUbgBTd5UapL8vkTVnFgg,,,N,0,0,,,2014-02-17 15:27,2014-03-01 17:09,admin,admin,
1319,128117,6764,35343,6640,0,N,N,N,CP_Drtn,TT_Task,DT_FixedDrtn,TK_NotStart,HHI.1715,Welding of Roof Plates (Long Seams),,450,0,30,0,1728.000001,1728.000001,30,249.6,0,249.6,,,,2014-11-04 16:00,2014-11-08 16:00,,2014-09-10 11:00,2014-09-13 16:00,2014-09-10 11:00,2014-09-13 16:00,2014-09-10 11:00,2014-09-13 16:00,2014-11-04 16:00,2014-11-08 16:00,,PT_Normal,,,,,V6Q18HaER2W8EoRWBPEBPA,RDdKSGFsF0OPxcuzZOBAbw,,,N,0,0,,,2014-02-17 15:27,2014-03-01 17:09,admin,admin,
1320,128118,6764,35343,6640,0,N,N,N,CP_Drtn,TT_Task,DT_FixedDrtn,TK_NotStart,HHI.1714,Tack of Roof Plates to Curb Angle,,490,40,10,0,416,416,10,0,0,0,,,,2014-11-06 16:00,2014-11-08 16:00,,2014-09-08 11:00,2014-09-09 11:00,2014-09-08 11:00,2014-09-09 11:00,2014-09-08 11:00,2014-09-09 11:00,2014-11-06 16:00,2014-11-08 16:00,,PT_Normal,,,,,tsMqPoQ6QNeqneW7/s3ASg,ENRdC9ikakCvZRqwjO1b4w,,,N,0,0,,,2014-02-17 15:27,2014-03-01 17:09,admin,admin,
1321,128119,6764,35343,6640,0,N,N,N,CP_Drtn,TT_Task,DT_FixedDrtn,TK_NotStart,HHI.1716,Welding of Roof Plates to Compression Ring,,450,0,20,0,608.000003,608.000003,20,85.333333,0,85.333333,,,,2014-11-08 16:00,2014-11-10 16:00,,2014-09-13 16:00,2014-09-15 16:00,2014-09-13 16:00,2014-09-15 16:00,2014-09-13 16:00,2014-09-15 16:00,2014-11-08 16:00,2014-11-10 16:00,,PT_Normal,,,,,GSFrvfNJRNuNrdHbQyGSLQ,LB5PfZbT20+bOiv1U/Dm7g,,,N,0,0,,,2014-02-17 15:27,2014-03-01 17:09,admin,admin,
1322,128120,6764,35343,6640,0,N,N,N,CP_Drtn,TT_Task,DT_FixedDrtn,TK_NotStart,HHI.1719,"Quailty Check (Visual Inspection& Vaccum Box Test,PT,Air Leak Test for Roof Manholes& Nozzles))",,450,0,110,0,27.111111,27.111111,110,33.066667,0,33.066667,,,,2014-10-30 16:00,2014-11-12 16:00,,2014-09-06 11:00,2014-09-17 16:00,2014-09-06 11:00,2014-09-17 16:00,2014-09-06 11:00,2014-09-17 16:00,2014-10-30 16:00,2014-11-12 16:00,,PT_Normal,,,,,W9tGOfhHQiiOZER15boyFg,wudMLiS1JUSPYx38xDeDuQ,,,N,0,0,,,2014-02-17 15:27,2014-03-01 17:09,admin,admin,
1323,128121,6764,35343,6640,0,N,N,N,CP_Drtn,TT_Task,DT_FixedDrtn,TK_NotStart,HHI.1717,"Fit,Weld Manholes ,Nozzles & install Top Platform Supports on Roof",,450,0,20,0,0,0,20,0,0,0,,,,2014-11-10 16:00,2014-11-12 16:00,,2014-09-15 16:00,2014-09-17 16:00,2014-09-15 16:00,2014-09-17 16:00,2014-09-15 16:00,2014-09-17 16:00,2014-11-10 16:00,2014-11-12 16:00,,PT_Normal,,,,,c9YGDiuqRQKWm6sfkVpzfw,zoyTLIgXu0WiQg0jn8hCqQ,,,N,0,0,,,2014-02-17 15:27,2014-03-01 17:09,admin,admin,
1324,128122,6764,35343,6640,0,N,N,N,CP_Drtn,TT_Task,DT_FixedDrtn,TK_NotStart,HHI.1718,Weld Internal Piping to Nozzle N1,,450,0,10,0,0,0,10,0,0,0,,,,2014-11-11 16:00,2014-11-12 16:00,,2014-09-16 16:00,2014-09-17 16:00,2014-09-16 16:00,2014-09-17 16:00,2014-09-16 16:00,2014-09-17 16:00,2014-11-11 16:00,2014-11-12 16:00,,PT_Normal,,,,,WWDhipyPRQqEjgpNVNDjBg,yvjlfOjRo02o6sgd0tuNeQ,,,N,0,0,,,2014-02-17 15:27,2014-03-01 17:09,admin,admin,
1325,128123,6764,35344,6640,0,N,N,N,CP_Drtn,TT_Task,DT_FixedDrtn,TK_NotStart,HHI.1720,Erect & Install Stairways & Platforms for Shell,,450,0,20,0,341.333337,341.333337,20,17.066667,0,17.066667,,,,2014-11-12 16:00,2014-11-15 16:00,,2014-09-17 16:00,2014-09-20 16:00,2014-09-17 16:00,2014-09-20 16:00,2014-09-17 16:00,2014-09-20 16:00,2014-11-12 16:00,2014-11-15 16:00,,PT_Normal,,,,,RK6t6jYKSgSmtn1hY1Rh5Q,7B5kXMK6Sk+AFji5H+7ykw,,,N,0,0,,,2014-02-17 15:27,2014-03-01 17:09,admin,admin,
1326,128124,6764,35344,6640,0,N,N,N,CP_Drtn,TT_Task,DT_FixedDrtn,TK_NotStart,HHI.1721,Erect & Install Stairways & Platforms & Handrails for Roof,,450,0,20,0,341.333337,341.333337,20,17.066667,0,17.066667,,,,2014-11-15 16:00,2014-11-17 16:00,,2014-09-20 16:00,2014-09-22 16:00,2014-09-20 16:00,2014-09-22 16:00,2014-09-20 16:00,2014-09-22 16:00,2014-11-15 16:00,2014-11-17 16:00,,PT_Normal,,,,,krpH/cNnQRaYTLK2lNz+gQ,IVzL7jL4KU+0NX97SkKCxg,,,N,0,0,,,2014-02-17 15:27,2014-03-01 17:09,admin,admin,
1327,128125,6764,35344,6640,0,N,N,N,CP_Drtn,TT_Task,DT_FixedDrtn,TK_NotStart,HHI.1722,Quality Check,,450,0,10,0,0,0,10,0,0,0,,,,2014-11-17 16:00,2014-11-18 16:00,,2014-09-22 16:00,2014-09-24 16:00,2014-09-22 16:00,2014-09-24 16:00,2014-09-22 16:00,2014-09-24 16:00,2014-11-17 16:00,2014-11-18 16:00,,PT_Normal,,,,,ISTRVvpJRL6DfnvOw6mtWQ,a8+DTHzlx0u6gT0aNmQa4w,,,N,0,0,,,2014-02-17 15:27,2014-03-01 17:09,admin,admin,
1328,128126,6764,35347,6640,0,N,N,N,CP_Drtn,TT_Task,DT_FixedDrtn,TK_NotStart,HHI.1772,Perform Roof Surface Preparation & Painting,,140,0,20,0,288,288,20,96,0,96,,,,2015-01-14 16:00,2015-01-17 16:00,,2014-12-29 16:00,2014-12-31 16:00,2014-12-29 16:00,2014-12-31 16:00,2014-12-29 16:00,2014-12-31 16:00,2015-01-14 16:00,2015-01-17 16:00,,PT_Normal,,,,,N4xNjU2jRlqj6vSsvjbI4A,7oUn9Gz4ck+ucpU2FiGveQ,,,N,0,0,,,2014-02-17 15:27,2014-03-01 17:09,admin,admin,
1329,128127,6764,35347,6640,0,N,N,N,CP_Drtn,TT_Task,DT_FixedDrtn,TK_NotStart,HHI.1771,Perform Shell Surface Preparation & Painting,,110,0,30,0,280,280,30,80,0,80,,,,2015-01-07 16:00,2015-01-11 16:00,,2014-12-25 16:00,2014-12-29 16:00,2014-12-25 16:00,2014-12-29 16:00,2014-12-25 16:00,2014-12-29 16:00,2015-01-07 16:00,2015-01-11 16:00,,PT_Normal,,,,,o/2BzAgmQGOyfwf8B9wONA,DdW5nvN0ske9bhoaYe6Hdw,,,N,0,0,,,2014-02-17 15:27,2014-03-01 17:09,admin,admin,
1330,128128,6764,35347,6640,0,N,N,N,CP_Drtn,TT_Task,DT_FixedDrtn,TK_NotStart,HHI.1773,Quailty Check,,140,30,50,0,285.48,285.48,50,351.36,0,351.36,,,,2015-01-11 16:00,2015-01-17 16:00,,2014-12-25 16:00,2014-12-31 16:00,2014-12-25 16:00,2014-12-31 16:00,2014-12-25 16:00,2014-12-31 16:00,2015-01-11 16:00,2015-01-17 16:00,,PT_Normal,,,,,3TSuUK7JSuWkj3hc6dq4/w,df7pZEYSnkeNt1BoeLoF5A,,,N,0,0,,,2014-02-17 15:27,2014-03-01 17:09,admin,admin,
1331,128129,6764,35348,6640,0,N,N,N,CP_Drtn,TT_Task,DT_FixedDrtn,TK_NotStart,HHI.1779,Quailty Check (including Holiday Test),,110,0,150,0,103.009524,103.009524,150,515.04762,0,515.04762,,,,2015-01-17 16:00,2015-02-03 16:00,,2015-01-04 16:00,2015-01-21 16:00,2015-01-04 16:00,2015-01-21 16:00,2015-01-04 16:00,2015-01-21 16:00,2015-01-17 16:00,2015-02-03 16:00,,PT_Normal,,,,,8h/kXpFHRva5xpOsbnLYwQ,T5sP4QgT4ki91WNEVRuUnA,,,N,0,0,,,2014-02-17 15:27,2014-03-01 17:09,admin,admin,
1332,128130,6764,35348,6640,0,N,N,N,CP_Drtn,TT_Task,DT_FixedDrtn,TK_NotStart,HHI.1775,Perform Roof Underside Surface Preparation & Painting,,110,0,40,0,1133.104762,1133.104762,40,206.019048,0,206.019048,,,,2015-01-17 16:00,2015-01-21 16:00,,2015-01-04 16:00,2015-01-08 16:00,2015-01-04 16:00,2015-01-08 16:00,2015-01-04 16:00,2015-01-08 16:00,2015-01-17 16:00,2015-01-21 16:00,,PT_Normal,,,,,SSYIbvLzTaaBPIfHN8JkSA,6a97Riq980CYNFRtbdRhFA,,,N,0,0,,,2014-02-17 15:27,2014-03-01 17:09,admin,admin,
1333,128131,6764,35348,6640,0,N,N,N,CP_Drtn,TT_Task,DT_FixedDrtn,TK_NotStart,HHI.1778,Perform Bottom Surface Preparation & Painting,,110,0,20,0,0,0,20,0,0,0,,,,2015-02-01 16:00,2015-02-03 16:00,,2015-01-19 16:00,2015-01-21 16:00,2015-01-19 16:00,2015-01-21 16:00,2015-01-19 16:00,2015-01-21 16:00,2015-02-01 16:00,2015-02-03 16:00,,PT_Normal,,,,,R3nhoEakT4GFnynyEOm/jg,cbJFeawP4Em29TMrCgYHDw,,,N,0,0,,,2014-02-17 15:27,2014-03-01 17:09,admin,admin,
1334,128132,6764,35348,6640,0,N,N,N,CP_Drtn,TT_Task,DT_FixedDrtn,TK_NotStart,HHI.1776,Perform Shell course Surface Preparation & Painting,,110,0,50,0,0,0,50,0,0,0,,,,2015-01-21 16:00,2015-01-27 16:00,,2015-01-08 16:00,2015-01-14 16:00,2015-01-08 16:00,2015-01-14 16:00,2015-01-08 16:00,2015-01-14 16:00,2015-01-21 16:00,2015-01-27 16:00,,PT_Normal,,,,,0Ut2bADcSbKYhCnAXOTI5g,ZfPA8jkCNkeOFBDulhdY0A,,,N,0,0,,,2014-02-17 15:27,2014-03-01 17:09,admin,admin,
1335,128133,6764,35348,6640,0,N,N,N,CP_Drtn,TT_Task,DT_FixedDrtn,TK_NotStart,HHI.1774,Install Scaffoldings,,110,0,80,0,0,0,80,0,0,0,,,,2015-01-07 16:00,2015-01-17 16:00,,2014-12-25 16:00,2015-01-04 16:00,2014-12-25 16:00,2015-01-04 16:00,2014-12-25 16:00,2015-01-04 16:00,2015-01-07 16:00,2015-01-17 16:00,,PT_Normal,,,,,q534umPCQQKwfOfmKsgtVQ,NDkfeEGnyU+/YjjsS7KL9w,,,N,0,0,,,2014-02-17 15:27,2014-03-01 17:09,admin,admin,
1336,128134,6764,35348,6640,0,N,N,N,CP_Drtn,TT_Task,DT_FixedDrtn,TK_NotStart,HHI.1777,Dismantle Scaffoldings,,110,0,40,0,0,0,40,0,0,0,,,,2015-01-27 16:00,2015-02-01 16:00,,2015-01-14 16:00,2015-01-19 16:00,2015-01-14 16:00,2015-01-19 16:00,2015-01-14 16:00,2015-01-19 16:00,2015-01-27 16:00,2015-02-01 16:00,,PT_Normal,,,,,w7wc6OndT+WWewGOJ7CgfQ,RaYqZHweTECVEgIl44ESRw,,,N,0,0,,,2014-02-17 15:27,2014-03-01 17:09,admin,admin,
1337,128135,6764,35350,6640,0,N,N,N,CP_Drtn,TT_Task,DT_FixedDrtn,TK_NotStart,HHI.1746,Remove Stagging Blanks/Brackets & Install Blind Flanges,,660,480,20,0,105.6,105.6,20,42.666666,0,42.666666,,,,2014-12-13 16:00,2014-12-15 16:00,,2014-09-24 16:00,2014-09-27 16:00,2014-09-24 16:00,2014-09-27 16:00,2014-09-24 16:00,2014-09-27 16:00,2014-12-13 16:00,2014-12-15 16:00,,PT_Normal,,,,,0qGwdGI0Qn2He70nR2xL4A,BYRJaxS6oU6cIGIMwZtRNg,,,N,0,0,,,2014-02-17 15:27,2014-03-01 17:09,admin,admin,
1338,128136,6764,35350,6640,0,N,N,N,CP_Drtn,TT_Task,DT_FixedDrtn,TK_NotStart,HHI.1747,Tank Water Filling & Settlement from Desanilated Water Tank #2,,180,0,100,0,1407.999998,1407.999998,100,3002.666666,0,3002.666666,,,,2014-12-15 16:00,2014-12-27 16:00,,2014-11-24 16:00,2014-12-06 16:00,2014-11-24 16:00,2014-12-06 16:00,2014-11-24 16:00,2014-12-06 16:00,2014-12-15 16:00,2014-12-27 16:00,,PT_Normal,,,,,tk4eFR4AR/CKdFCrzWHiWg,Pgs3KN5mkkmN7OGUfaEF0Q,,,N,0,0,,,2014-02-17 15:27,2014-03-01 17:09,admin,admin,
1339,128137,6764,35350,6640,0,N,N,N,CP_Drtn,TT_Task,DT_FixedDrtn,TK_NotStart,HHI.1748,Hold & Inspect Water for 24 Hours,,180,0,10,0,128.000001,128.000001,10,85.333333,0,85.333333,,,,2014-12-27 16:00,2014-12-28 16:00,,2014-12-06 16:00,2014-12-07 16:00,2014-12-06 16:00,2014-12-07 16:00,2014-12-06 16:00,2014-12-07 16:00,2014-12-27 16:00,2014-12-28 16:00,,PT_Normal,,,,,bEOYGTY9SBO0f/q2Vv1/Jg,abx6tcHvYkG4aRg4pttOFw,,,N,0,0,,,2014-02-17 15:27,2014-03-01 17:09,admin,admin,
1340,128138,6764,35350,6640,0,N,N,N,CP_Drtn,TT_Task,DT_FixedDrtn,TK_NotStart,HHI.1750,"Build Mobile Scaffolding,Internal CLeaning&Dismantling",,180,0,30,0,73.200001,73.200001,30,85.333334,0,85.333334,,,,2015-01-03 16:00,2015-01-06 16:00,,2014-12-13 16:00,2014-12-16 16:00,2014-12-13 16:00,2014-12-16 16:00,2014-12-13 16:00,2014-12-16 16:00,2015-01-03 16:00,2015-01-06 16:00,,PT_Normal,,,,,hZ0e12tBRN+zLnHXvNxQAQ,ti7lo1reWkiK/HbLWJG2Pw,,,N,0,0,,,2014-02-17 15:27,2014-03-01 17:09,admin,admin,
1341,128139,6764,35350,6640,0,N,N,N,CP_Drtn,TT_Task,DT_FixedDrtn,TK_NotStart,HHI.1751,Quailty Check,,180,0,10,0,50.666666,50.666666,10,42.666667,0,42.666667,,,,2015-01-06 16:00,2015-01-07 16:00,,2014-12-16 16:00,2014-12-17 16:00,2014-12-16 16:00,2014-12-17 16:00,2014-12-16 16:00,2014-12-17 16:00,2015-01-06 16:00,2015-01-07 16:00,,PT_Normal,,,,,tspGmQRGRbCCjQEsOPvDRg,HrokTdHDsUGq7bYemhPFrw,,,N,0,0,,,2014-02-17 15:27,2014-03-01 17:09,admin,admin,
1342,128140,6764,35350,6640,0,N,N,N,CP_Drtn,TT_Task,DT_FixedDrtn,TK_NotStart,HHI.1749,Drain Water from Tank,,180,0,50,0,420.48,420.48,50,69.12,0,69.12,,,,2014-12-28 16:00,2015-01-03 16:00,,2014-12-07 16:00,2014-12-13 16:00,2014-12-07 16:00,2014-12-13 16:00,2014-12-07 16:00,2014-12-13 16:00,2014-12-28 16:00,2015-01-03 16:00,,PT_Normal,,,,,971nxLRFQoKw2HllLno8wg,2GGzOcttE0iFoXAWpiEeRg,,,N,0,0,,,2014-02-17 15:27,2014-03-01 17:09,admin,admin,
1343,128141,6764,35351,6640,0,N,N,N,CP_Drtn,TT_Task,DT_FixedDrtn,TK_NotStart,HHI.1752,Remove Stagging Blanks/Brackets & Install Blind Flanges,,450,340,20,0,936,936,20,72,0,72,,,,2014-12-14 16:00,2014-12-16 16:00,,2014-10-22 16:00,2014-10-25 16:00,2014-10-22 16:00,2014-10-25 16:00,2014-10-22 16:00,2014-10-25 16:00,2014-12-14 16:00,2014-12-16 16:00,,PT_Normal,,,,,S5DK6EonR829J5SUDks+xQ,yljg/fUVtECjDFHsWcIuDw,,,N,0,0,,,2014-02-17 15:27,2014-03-01 17:09,admin,admin,
1344,128142,6764,35351,6640,0,N,N,N,CP_Drtn,TT_Task,DT_FixedDrtn,TK_NotStart,HHI.1754,Hold & Inspect Water for 24 Hours/Drain Water,,110,0,50,0,34.133333,34.133333,50,85.333334,0,85.333334,,,,2014-12-28 16:00,2015-01-03 16:00,,2014-12-15 16:00,2014-12-21 16:00,2014-12-15 16:00,2014-12-21 16:00,2014-12-15 16:00,2014-12-21 16:00,2014-12-28 16:00,2015-01-03 16:00,,PT_Normal,,,,,atZKm/ISTUWiiOaZ6GR5ew,9eJibQABwEON6s+CSXwQPw,,,N,0,0,,,2014-02-17 15:27,2014-03-01 17:09,admin,admin,
1345,128143,6764,35351,6640,0,N,N,N,CP_Drtn,TT_Task,DT_FixedDrtn,TK_NotStart,HHI.1755,"Build Mobile Scaffolding,Internal CLeaning&Dismantling",,110,0,30,0,80,80,30,85.333334,0,85.333334,,,,2015-01-03 16:00,2015-01-06 16:00,,2014-12-21 16:00,2014-12-24 16:00,2014-12-21 16:00,2014-12-24 16:00,2014-12-21 16:00,2014-12-24 16:00,2015-01-03 16:00,2015-01-06 16:00,,PT_Normal,,,,,iEoq1oVYTh+bMCqqdJSwhQ,5kt7yiwKtUefVhb8/bKezA,,,N,0,0,,,2014-02-17 15:27,2014-03-01 17:09,admin,admin,
1346,128144,6764,35351,6640,0,N,N,N,CP_Drtn,TT_Task,DT_FixedDrtn,TK_NotStart,HHI.1756,Quailty Check,,110,0,10,0,25.6,25.6,10,42.666666,0,42.666666,,,,2015-01-06 16:00,2015-01-07 16:00,,2014-12-24 16:00,2014-12-25 16:00,2014-12-24 16:00,2014-12-25 16:00,2014-12-24 16:00,2014-12-25 16:00,2015-01-06 16:00,2015-01-07 16:00,,PT_Normal,,,,,OAVEiiCsQeCYecE6CGhm2Q,zjIXJvcRukK1C7yn/ehVSQ,,,N,0,0,,,2014-02-17 15:27,2014-03-01 17:09,admin,admin,
1347,128145,6764,35351,6640,0,N,N,N,CP_Drtn,TT_Task,DT_FixedDrtn,TK_NotStart,HHI.1753,Tank Water Filling/Settlement from Desanilated Water Tank #2,,110,0,100,0,0,0,100,0,0,0,,,,2014-12-16 16:00,2014-12-28 16:00,,2014-12-03 16:00,2014-12-15 16:00,2014-12-03 16:00,2014-12-15 16:00,2014-12-03 16:00,2014-12-15 16:00,2014-12-16 16:00,2014-12-28 16:00,,PT_Normal,,,,,40GjeQQaQIGE2+pn5kWayw,cmVL0Hc3eUusKVb8KL1GUg,,,N,0,0,,,2014-02-17 15:27,2014-03-01 17:09,admin,admin,
1348,128146,6764,35353,6640,0,N,N,N,CP_Drtn,TT_Task,DT_FixedDrtn,TK_NotStart,HHI.1757,Weld & Align Roof Columns,,180,0,20,0,0,0,20,0,0,0,,,,2015-01-06 16:00,2015-01-08 16:00,,2014-12-16 16:00,2014-12-18 16:00,2014-12-16 16:00,2014-12-18 16:00,2014-12-16 16:00,2014-12-18 16:00,2015-01-06 16:00,2015-01-08 16:00,,PT_Normal,,,,,WUOkXbzITPWj9bbcZ1FgMA,lykAxzrdRkWkvGlsSmlrsg,,,N,0,0,,,2014-02-17 15:27,2014-03-01 17:09,admin,admin,
1349,128147,6764,35354,6640,0,N,N,N,CP_Drtn,TT_Task,DT_FixedDrtn,TK_NotStart,HHI.1758,Weld & Align Roof Columns,,110,0,20,0,0,0,20,0,0,0,,,,2015-01-06 16:00,2015-01-08 16:00,,2014-12-24 16:00,2014-12-27 16:00,2014-12-24 16:00,2014-12-27 16:00,2014-12-24 16:00,2014-12-27 16:00,2015-01-06 16:00,2015-01-08 16:00,,PT_Normal,,,,,qNo9uel/RA29W8pRM0RClA,QfyPi8OSBkOm8MsMpC2ucQ,,,N,0,0,,,2014-02-17 15:27,2014-03-01 17:09,admin,admin,
1350,128148,6764,35356,6640,0,N,N,N,CP_Drtn,TT_Task,DT_FixedDrtn,TK_NotStart,HHI.1763,Perform Roof Surface Preparation & Painting,,210,0,20,0,288,288,20,96,0,96,,,,2015-01-14 16:00,2015-01-17 16:00,,2014-12-21 16:00,2014-12-23 16:00,2014-12-21 16:00,2014-12-23 16:00,2014-12-21 16:00,2014-12-23 16:00,2015-01-14 16:00,2015-01-17 16:00,,PT_Normal,,,,,bU9t4TzpTJyfG95kyR0OxA,RjuqV+TgiUu5ghNCH/H/Hg,,,N,0,0,,,2014-02-17 15:27,2014-03-01 17:09,admin,admin,
1351,128149,6764,35356,6640,0,N,N,N,CP_Drtn,TT_Task,DT_FixedDrtn,TK_NotStart,HHI.1762,Perform Shell Surface Preparation & Painting,,180,0,30,0,280,280,30,80,0,80,,,,2015-01-07 16:00,2015-01-11 16:00,,2014-12-17 16:00,2014-12-21 16:00,2014-12-17 16:00,2014-12-21 16:00,2014-12-17 16:00,2014-12-21 16:00,2015-01-07 16:00,2015-01-11 16:00,,PT_Normal,,,,,GMlYZMwGT8uAtuTb/qnCdw,cDIG/Z5JnUWfMyPzJ9tQ2g,,,N,0,0,,,2014-02-17 15:27,2014-03-01 17:09,admin,admin,
1352,128150,6764,35356,6640,0,N,N,N,CP_Drtn,TT_Task,DT_FixedDrtn,TK_NotStart,HHI.1764,Quailty Check,,210,30,50,0,285.48,285.48,50,351.36,0,351.36,,,,2015-01-11 16:00,2015-01-17 16:00,,2014-12-17 16:00,2014-12-23 16:00,2014-12-17 16:00,2014-12-23 16:00,2014-12-17 16:00,2014-12-23 16:00,2015-01-11 16:00,2015-01-17 16:00,,PT_Normal,,,,,oppIC/4/TW2142GTiFhyUA,CGRXMiWnSUqpJsWw7X9Y0Q,,,N,0,0,,,2014-02-17 15:27,2014-03-01 17:09,admin,admin,
1353,128151,6764,35357,6640,0,N,N,N,CP_Drtn,TT_Task,DT_FixedDrtn,TK_NotStart,HHI.1770,Quailty Check (including Holiday Test),,180,0,150,0,103.009524,103.009524,150,515.04762,0,515.04762,,,,2015-01-17 16:00,2015-02-03 16:00,,2014-12-27 16:00,2015-01-13 16:00,2014-12-27 16:00,2015-01-13 16:00,2014-12-27 16:00,2015-01-13 16:00,2015-01-17 16:00,2015-02-03 16:00,,PT_Normal,,,,,CX8iZlKoSYS/gjaRnmTs0w,38cxw3SOb0iFp8OpO99ldw,,,N,0,0,,,2014-02-17 15:27,2014-03-01 17:09,admin,admin,
1354,128152,6764,35357,6640,0,N,N,N,CP_Drtn,TT_Task,DT_FixedDrtn,TK_NotStart,HHI.1766,Perform Roof Underside Surface Preparation & Painting,,180,0,40,0,1133.104762,1133.104762,40,206.019048,0,206.019048,,,,2015-01-17 16:00,2015-01-21 16:00,,2014-12-27 16:00,2014-12-31 16:00,2014-12-27 16:00,2014-12-31 16:00,2014-12-27 16:00,2014-12-31 16:00,2015-01-17 16:00,2015-01-21 16:00,,PT_Normal,,,,,k3p7GrmCT8e67i97ptB1NA,qLVUi4fVkEuFof5MbyDorg,,,N,0,0,,,2014-02-17 15:27,2014-03-01 17:09,admin,admin,
1355,128153,6764,35357,6640,0,N,N,N,CP_Drtn,TT_Task,DT_FixedDrtn,TK_NotStart,HHI.1769,Perform Bottom Surface Preparation & Painting,,180,0,20,0,0,0,20,0,0,0,,,,2015-02-01 16:00,2015-02-03 16:00,,2015-01-11 16:00,2015-01-13 16:00,2015-01-11 16:00,2015-01-13 16:00,2015-01-11 16:00,2015-01-13 16:00,2015-02-01 16:00,2015-02-03 16:00,,PT_Normal,,,,,l4Yw9bh3TUKGY49oYTC7hg,EaLRddfzJ02ZFyoxdLzDWw,,,N,0,0,,,2014-02-17 15:27,2014-03-01 17:09,admin,admin,
1356,128154,6764,35357,6640,0,N,N,N,CP_Drtn,TT_Task,DT_FixedDrtn,TK_NotStart,HHI.1767,Perform Shell course Surface Preparation & Painting,,180,0,50,0,0,0,50,0,0,0,,,,2015-01-21 16:00,2015-01-27 16:00,,2014-12-31 16:00,2015-01-06 16:00,2014-12-31 16:00,2015-01-06 16:00,2014-12-31 16:00,2015-01-06 16:00,2015-01-21 16:00,2015-01-27 16:00,,PT_Normal,,,,,SmPLb/6BSQ+vWu11GOjVrw,B/Y+KQu+gEGlAY3SGyA9TA,,,N,0,0,,,2014-02-17 15:27,2014-03-01 17:09,admin,admin,
1357,128155,6764,35357,6640,0,N,N,N,CP_Drtn,TT_Task,DT_FixedDrtn,TK_NotStart,HHI.1765,Install Scaffoldings,,180,0,80,0,0,0,80,0,0,0,,,,2015-01-07 16:00,2015-01-17 16:00,,2014-12-17 16:00,2014-12-27 16:00,2014-12-17 16:00,2014-12-27 16:00,2014-12-17 16:00,2014-12-27 16:00,2015-01-07 16:00,2015-01-17 16:00,,PT_Normal,,,,,ZDvRXh66S9yhUs1mYcgI8w,E0i7QLo4WEy2HR1lE+3B/g,,,N,0,0,,,2014-02-17 15:27,2014-03-01 17:09,admin,admin,
1358,128156,6764,35357,6640,0,N,N,N,CP_Drtn,TT_Task,DT_FixedDrtn,TK_NotStart,HHI.1768,Dismantle Scaffoldings,,180,0,40,0,0,0,40,0,0,0,,,,2015-01-27 16:00,2015-02-01 16:00,,2015-01-06 16:00,2015-01-11 16:00,2015-01-06 16:00,2015-01-11 16:00,2015-01-06 16:00,2015-01-11 16:00,2015-01-27 16:00,2015-02-01 16:00,,PT_Normal,,,,,OrMvz/uoQ6+CMJWlscYi8w,R5/V18GIR0mEH+HfC39pqw,,,N,0,0,,,2014-02-17 15:27,2014-03-01 17:09,admin,admin,
1359,128157,6764,35359,6640,0,N,N,N,CP_Drtn,TT_Task,DT_FixedDrtn,TK_NotStart,HHI.1780,"Install Valves,instruments (Supplied by client)",,180,0,10,0,0,0,10,0,0,0,,,,2015-02-03 16:00,2015-02-04 16:00,,2015-01-13 16:00,2015-01-14 16:00,2015-01-13 16:00,2015-01-14 16:00,2015-01-13 16:00,2015-01-14 16:00,2015-02-03 16:00,2015-02-04 16:00,,PT_Normal,,,,,az3J6JukQ+uvVgLGDIrcmg,olpW7cQMuEuSI7nfJnv66A,,,N,0,0,,,2014-02-17 15:27,2014-03-01 17:09,admin,admin,
1360,128158,6764,35360,6640,0,N,N,N,CP_Drtn,TT_Task,DT_FixedDrtn,TK_NotStart,HHI.1782,"Install Valves,instruments (Supplied by client)",,110,0,10,0,0,0,10,0,0,0,,,,2015-02-03 16:00,2015-02-04 16:00,,2015-01-21 16:00,2015-01-22 16:00,2015-01-21 16:00,2015-01-22 16:00,2015-01-21 16:00,2015-01-22 16:00,2015-02-03 16:00,2015-02-04 16:00,,PT_Normal,,,,,UsseTXbYRd6wI1cX5Pt74w,bTD7eL6rlky0ZUHPC1rYjg,,,N,0,0,,,2014-02-17 15:27,2014-03-01 17:09,admin,admin,
1361,128159,6764,35362,6640,0,N,N,N,CP_Drtn,TT_Task,DT_FixedDrtn,TK_NotStart,HHI.1759,"Fit,Weld Name Plate brackets/Attachments on shell Course #1",,180,0,10,0,17.066666,17.066666,10,42.666666,0,42.666666,,,,2015-01-06 16:00,2015-01-07 16:00,,2014-12-16 16:00,2014-12-17 16:00,2014-12-16 16:00,2014-12-17 16:00,2014-12-16 16:00,2014-12-17 16:00,2015-01-06 16:00,2015-01-07 16:00,,PT_Normal,,,,,PBgwQIuWSzC23a4JBWubTQ,KFtQkFRRIES57DRDXvf9GA,,,N,0,0,,,2014-02-17 15:27,2014-03-01 17:09,admin,admin,
1362,128160,6764,35363,6640,0,N,N,N,CP_Drtn,TT_Task,DT_FixedDrtn,TK_NotStart,HHI.1760,"Fit,Weld Name Plate brackets/Attachments on shell Course #1",,110,0,10,0,51.199998,51.199998,10,42.666667,0,42.666667,,,,2015-01-06 16:00,2015-01-07 16:00,,2014-12-24 16:00,2014-12-25 16:00,2014-12-24 16:00,2014-12-25 16:00,2014-12-24 16:00,2014-12-25 16:00,2015-01-06 16:00,2015-01-07 16:00,,PT_Normal,,,,,0CFY/1/tTtmY2eNfActPGw,UYcRpN/ZjU+g0b7y+Qb8Og,,,N,0,0,,,2014-02-17 15:27,2014-03-01 17:09,admin,admin,
1363,128161,6764,35365,6640,0,N,N,N,CP_Drtn,TT_Task,DT_FixedDrtn,TK_NotStart,HHI.1781,Perform Final Inspection & Handover to CLient,,180,180,10,0,0,0,10,0,0,0,,,,2015-02-04 16:00,2015-02-05 16:00,,2015-01-14 16:00,2015-01-15 16:00,2015-01-14 16:00,2015-01-15 16:00,2015-01-14 16:00,2015-01-15 16:00,2015-02-04 16:00,2015-02-05 16:00,,PT_Normal,,,,,lK/pkeEhSNqGMha+D7O2Yg,7fywY1krIUWbQ46fJVpvsQ,,,N,0,0,,,2014-02-17 15:27,2014-03-01 17:09,admin,admin,
1364,128162,6764,35366,6640,0,N,N,N,CP_Drtn,TT_Task,DT_FixedDrtn,TK_NotStart,HHI.1783,Perform Final Inspection & Handover to CLient,,110,110,10,0,0,0,10,0,0,0,,,,2015-02-04 16:00,2015-02-05 16:00,,2015-01-22 16:00,2015-01-24 16:00,2015-01-22 16:00,2015-01-24 16:00,2015-01-22 16:00,2015-01-24 16:00,2015-02-04 16:00,2015-02-05 16:00,,PT_Normal,,,,,29ggB//WS2WLlOfrUBD39g,3bUHtGbkDka0WY3sxSzJqA,,,N,0,0,,,2014-02-17 15:27,2014-03-01 17:09,admin,admin,
1365,128163,6764,35370,6640,0,N,N,N,CP_Drtn,TT_Task,DT_FixedDrtn,TK_NotStart,HHI.1212,Prepare/Lay Down Roof Plates (38 Plates),,0,0,20,0,864.000004,864.000004,20,17.066667,0,17.066667,,,,2014-08-10 11:00,2014-08-12 11:00,,2014-08-10 11:00,2014-08-12 11:00,2014-08-10 11:00,2014-08-12 11:00,2014-08-10 11:00,2014-08-12 11:00,2014-08-10 11:00,2014-08-12 11:00,,PT_Normal,,,,,PHAAadncSMSIPEgHhKF6cA,M+LWXTH44ku1W68wnrFfow,,,Y,0,0,,,2014-02-17 15:27,2014-03-01 17:03,admin,admin,
1366,128164,6764,35370,6640,0,N,N,N,CP_Drtn,TT_Task,DT_FixedDrtn,TK_NotStart,HHI.1213,Tacking of Roof Plates,,0,0,20,0,968,968,20,0,0,0,,,,2014-08-10 11:00,2014-08-12 11:00,,2014-08-10 11:00,2014-08-12 11:00,2014-08-10 11:00,2014-08-12 11:00,2014-08-10 11:00,2014-08-12 11:00,2014-08-10 11:00,2014-08-12 11:00,,PT_Normal,,,,,2FDFuMabQRehlg2qPu9+vg,Lfs23UoPaUakhzW0njsHQA,,,Y,0,0,,,2014-02-17 15:27,2014-03-01 17:03,admin,admin,
1367,128165,6764,35370,6640,0,N,N,N,CP_Drtn,TT_Task,DT_FixedDrtn,TK_NotStart,HHI.1215,Welding of Roof Plates (Short Seams),,0,0,20,0,544,544,20,128,0,128,,,,2014-08-12 11:00,2014-08-14 11:00,,2014-08-12 11:00,2014-08-14 11:00,2014-08-12 11:00,2014-08-14 11:00,2014-08-12 11:00,2014-08-14 11:00,2014-08-12 11:00,2014-08-14 11:00,,PT_Normal,,,,,Aqk0UKqmTq6JR7ia3Q4ucQ,/izagY3GWk2jgrjRxHZObQ,,,Y,0,0,,,2014-02-17 15:27,2014-03-01 17:03,admin,admin,
1368,128166,6764,35370,6640,0,N,N,N,CP_Drtn,TT_Task,DT_FixedDrtn,TK_NotStart,HHI.1216,Welding of Roof Plates (Long Seams),,0,0,30,0,1728.000001,1728.000001,30,249.6,0,249.6,,,,2014-08-14 11:00,2014-08-17 16:00,,2014-08-14 11:00,2014-08-17 16:00,2014-08-14 11:00,2014-08-17 16:00,2014-08-14 11:00,2014-08-17 16:00,2014-08-14 11:00,2014-08-17 16:00,,PT_Normal,,,,,xMfNmgY0RKOXovb+0szp8Q,leo6+u5GqEO35Sx5TfHNvg,,,Y,0,0,,,2014-02-17 15:27,2014-03-01 17:03,admin,admin,
1369,128167,6764,35370,6640,0,N,N,N,CP_Drtn,TT_Task,DT_FixedDrtn,TK_NotStart,HHI.1214,Tack of Roof Plates to Curb Angle,,40,40,10,0,416,416,10,0,0,0,,,,2014-08-16 16:00,2014-08-17 16:00,,2014-08-12 11:00,2014-08-13 11:00,2014-08-12 11:00,2014-08-13 11:00,2014-08-12 11:00,2014-08-13 11:00,2014-08-16 16:00,2014-08-17 16:00,,PT_Normal,,,,,6D2u2HkQQh+ghXNqx/4fqQ,h+c/tJ5lzEW/57AwmfP1CQ,,,N,0,0,,,2014-02-17 15:27,2014-03-01 17:03,admin,admin,
1370,128168,6764,35370,6640,0,N,N,N,CP_Drtn,TT_Task,DT_FixedDrtn,TK_NotStart,HHI.1217,Welding of Roof Plates to Curb Angle,,0,0,10,0,608.000003,608.000003,10,85.333333,0,85.333333,,,,2014-08-17 16:00,2014-08-18 16:00,,2014-08-17 16:00,2014-08-18 16:00,2014-08-17 16:00,2014-08-18 16:00,2014-08-17 16:00,2014-08-18 16:00,2014-08-17 16:00,2014-08-18 16:00,,PT_Normal,,,,,08cs+MzMQGCeEuZH9tlVzQ,iBiMErvxCEO8vpbHn3TsFg,,,Y,0,0,,,2014-02-17 15:27,2014-03-01 17:03,admin,admin,
1371,128169,6764,35370,6640,0,N,N,N,CP_Drtn,TT_Task,DT_FixedDrtn,TK_NotStart,HHI.1220,"Quailty Check (Visual Inspection& Vaccum Box Test,PT,Air Leak Test for Roof Manholes& Nozzles))",,0,0,110,0,27.111111,27.111111,110,33.066667,0,33.066667,,,,2014-08-10 11:00,2014-08-21 16:00,,2014-08-10 11:00,2014-08-21 16:00,2014-08-10 11:00,2014-08-21 16:00,2014-08-10 11:00,2014-08-21 16:00,2014-08-10 11:00,2014-08-21 16:00,,PT_Normal,,,,,C/7w0qEuShetg2Y+qgVSsg,3lqhUUyIjk27T+/KpFJ6fw,,,Y,0,0,,,2014-02-17 15:27,2014-03-01 17:03,admin,admin,
1372,128170,6764,35370,6640,0,N,N,N,CP_Drtn,TT_Task,DT_FixedDrtn,TK_NotStart,HHI.1218,"Fit,Weld Manholes ,Nozzles on Roof & install Top Platform Supports on Roof",,0,0,20,0,0,0,20,0,0,0,,,,2014-08-19 16:00,2014-08-21 16:00,,2014-08-19 16:00,2014-08-21 16:00,2014-08-19 16:00,2014-08-21 16:00,2014-08-19 16:00,2014-08-21 16:00,2014-08-19 16:00,2014-08-21 16:00,,PT_Normal,,,,,sEhUT+ZsRVWWQraXk4xtZQ,6oIcDkRTBkKLoAndg7Xsfw,,,Y,0,0,,,2014-02-17 15:27,2014-03-01 17:03,admin,admin,
1373,128171,6764,35370,6640,0,N,N,N,CP_Drtn,TT_Task,DT_FixedDrtn,TK_NotStart,HHI.1219,Weld Internal Piping to Nozzle N1,,0,0,10,0,0,0,10,0,0,0,,,,2014-08-20 16:00,2014-08-21 16:00,,2014-08-20 16:00,2014-08-21 16:00,2014-08-20 16:00,2014-08-21 16:00,2014-08-20 16:00,2014-08-21 16:00,2014-08-20 16:00,2014-08-21 16:00,,PT_Normal,,,,,M7WkZQE4RZ+LfQqyoM2kBA,spLUNMl3VEOrgCCeSSjLzQ,,,Y,0,0,,,2014-02-17 15:27,2014-03-01 17:03,admin,admin,
1374,128172,6764,35371,6640,0,N,N,N,CP_Drtn,TT_Task,DT_FixedDrtn,TK_NotStart,HHI.1209,"Erect,& Install the Rafters (85 Rafters) /Install Internal Piping Brackets/Piping",,0,0,50,0,1343.999994,1343.999994,50,17.066666,0,17.066666,,,,2014-08-06 16:00,2014-08-12 11:00,,2014-08-06 16:00,2014-08-12 11:00,2014-08-06 16:00,2014-08-12 11:00,2014-08-06 16:00,2014-08-12 11:00,2014-08-06 16:00,2014-08-12 11:00,,PT_Normal,,,,,ed4J84wJRISSh9fQbQufxg,ZACZuNVs0UG3XycvNSHj3A,,,Y,0,0,,,2014-02-17 15:27,2014-03-01 17:03,admin,admin,
1375,128173,6764,35372,6640,0,N,N,N,CP_Drtn,TT_Task,DT_FixedDrtn,TK_NotStart,HHI.1208,"Erect,& install Girders to Columns (1 Layer ,5 Girders)",,0,0,20,0,341.333331,341.333331,20,17.066666,0,17.066666,,,,2014-08-05 16:00,2014-08-07 16:00,,2014-08-05 16:00,2014-08-07 16:00,2014-08-05 16:00,2014-08-07 16:00,2014-08-05 16:00,2014-08-07 16:00,2014-08-05 16:00,2014-08-07 16:00,,PT_Normal,,,,,WoygJxxlSvOkKqALEASznA,L/pZz9N7rEmYsPmCRoxJjg,,,Y,0,0,,,2014-02-17 15:27,2014-03-01 17:03,admin,admin,
1376,128174,6764,35373,6640,0,N,N,N,CP_Drtn,TT_Task,DT_FixedDrtn,TK_NotStart,HHI.1201,"""""Fit & Tack 
Shell Course # 8 & Top Curb Angle",,0,0,20,0,255.999999,255.999999,20,8.533333,0,8.533333,,,,2014-08-03 16:00,2014-08-05 16:00,,2014-08-03 16:00,2014-08-05 16:00,2014-08-03 16:00,2014-08-05 16:00,2014-08-03 16:00,2014-08-05 16:00,2014-08-03 16:00,2014-08-05 16:00,,PT_Normal,,,,,jurkRNaTSMOrcsO+AgSN7A,rCYGquYG7UScaUkP04QJ/w,,,Y,0,0,,,2014-02-17 15:27,2014-03-01 17:03,admin,admin,
1377,128175,6764,35373,6640,0,N,N,N,CP_Drtn,TT_Task,DT_FixedDrtn,TK_NotStart,HHI.1202,Weld Outer Horizontal Seam between Shell Course # 7 & Top Curb Angle,,10,0,10,0,128,128,10,33.066667,0,33.066667,,,,2014-08-06 16:00,2014-08-07 16:00,,2014-08-05 16:00,2014-08-06 16:00,2014-08-05 16:00,2014-08-06 16:00,2014-08-05 16:00,2014-08-06 16:00,2014-08-06 16:00,2014-08-07 16:00,,PT_Normal,,,,,WxF5L013RIGatZ2vUiaBiQ,y2/MkgwEMUC/4kVHNv4XYg,,,N,0,0,,,2014-02-17 15:27,2014-03-01 17:03,admin,admin,
1378,128176,6764,35373,6640,0,N,N,N,CP_Drtn,TT_Task,DT_FixedDrtn,TK_NotStart,HHI.1203,"""""Backgouge & NDT Inside Horizontal Seam between Shell Course# 7 & Top Curb Angle",,10,10,10,0,90,90,10,33.066667,0,33.066667,,,,2014-08-06 16:00,2014-08-07 16:00,,2014-08-05 16:00,2014-08-06 16:00,2014-08-05 16:00,2014-08-06 16:00,2014-08-05 16:00,2014-08-06 16:00,2014-08-06 16:00,2014-08-07 16:00,,PT_Normal,,,,,Xs2mrq75Q0qyfdDGJVH4Hg,SeyXt42NTESt0L8I23aSvQ,,,N,0,0,,,2014-02-17 15:27,2014-03-01 17:03,admin,admin,
1379,128177,6764,35373,6640,0,N,N,N,CP_Drtn,TT_Task,DT_FixedDrtn,TK_NotStart,HHI.1205,Weld Inner Horizontal Seam between Shell Course # 7 & Top Curb Angle,,0,0,10,0,191.333334,191.333334,10,33.066667,0,33.066667,,,,2014-08-07 16:00,2014-08-09 11:00,,2014-08-07 16:00,2014-08-09 11:00,2014-08-07 16:00,2014-08-09 11:00,2014-08-07 16:00,2014-08-09 11:00,2014-08-07 16:00,2014-08-09 11:00,,PT_Normal,,,,,Uf0NWXxmRAO4vjuY8odxgA,2Zm45dwrGEi92T8a/Xkihw,,,Y,0,0,,,2014-02-17 15:27,2014-03-01 17:03,admin,admin,
1380,128178,6764,35373,6640,0,N,N,N,CP_Drtn,TT_Task,DT_FixedDrtn,TK_NotStart,HHI.1207,Quailty Check (Visual Inspection),,0,0,50,0,42.666664,42.666664,50,42.666667,0,42.666667,,,,2014-08-03 16:00,2014-08-09 11:00,,2014-08-03 16:00,2014-08-09 11:00,2014-08-03 16:00,2014-08-09 11:00,2014-08-03 16:00,2014-08-09 11:00,2014-08-03 16:00,2014-08-09 11:00,,PT_Normal,,,,,kmNPSUqSTFG2eh6XWIDSXQ,CULjMXbMLE6nXfPGYHTSSA,,,Y,0,0,,,2014-02-17 15:27,2014-03-01 17:03,admin,admin,
1381,128179,6764,35373,6640,0,N,N,N,CP_Drtn,TT_Task,DT_FixedDrtn,TK_NotStart,HHI.1204,"Fit up,Tack of Gusset Plates to Shell",,0,0,20,0,341.333337,341.333337,20,17.066667,0,17.066667,,,,2014-08-05 16:00,2014-08-07 16:00,,2014-08-05 16:00,2014-08-07 16:00,2014-08-05 16:00,2014-08-07 16:00,2014-08-05 16:00,2014-08-07 16:00,2014-08-05 16:00,2014-08-07 16:00,,PT_Normal,,,,,8/lKiGM4QviIkCWMDP1fZQ,qFqzBHSkvEOWcGdyifxxWw,,,Y,0,0,,,2014-02-17 15:27,2014-03-01 17:03,admin,admin,
1382,128180,6764,35373,6640,0,N,N,N,CP_Drtn,TT_Task,DT_FixedDrtn,TK_NotStart,HHI.1206,Welding of Gusset Plates,,0,0,10,0,202.666668,202.666668,10,85.333333,0,85.333333,,,,2014-08-07 16:00,2014-08-09 11:00,,2014-08-07 16:00,2014-08-09 11:00,2014-08-07 16:00,2014-08-09 11:00,2014-08-07 16:00,2014-08-09 11:00,2014-08-07 16:00,2014-08-09 11:00,,PT_Normal,,,,,Ymzb8MltTq2O0yKO95A3LA,/uB0CaTIc0W6nZG0jagalg,,,Y,0,0,,,2014-02-17 15:27,2014-03-01 17:03,admin,admin,
1383,128181,6764,35374,6640,0,N,N,N,CP_Drtn,TT_Task,DT_FixedDrtn,TK_NotStart,HHI.1221,Erect & Install Stairways & Platforms for Shell,,0,0,20,0,341.333337,341.333337,20,17.066667,0,17.066667,,,,2014-08-23 11:00,2014-08-25 11:00,,2014-08-23 11:00,2014-08-25 11:00,2014-08-23 11:00,2014-08-25 11:00,2014-08-23 11:00,2014-08-25 11:00,2014-08-23 11:00,2014-08-25 11:00,,PT_Normal,,,,,dy8+fT/xSCaQAqUi5KMGlg,P5Dsds3VbUmQibzwPe3UOA,,,Y,0,0,,,2014-02-17 15:27,2014-03-01 17:03,admin,admin,
1384,128182,6764,35374,6640,0,N,N,N,CP_Drtn,TT_Task,DT_FixedDrtn,TK_NotStart,HHI.1222,Erect & Install Stairways & Platforms & Handrails for Roof,,0,0,20,0,341.333337,341.333337,20,17.066667,0,17.066667,,,,2014-08-25 11:00,2014-08-27 11:00,,2014-08-25 11:00,2014-08-27 11:00,2014-08-25 11:00,2014-08-27 11:00,2014-08-25 11:00,2014-08-27 11:00,2014-08-25 11:00,2014-08-27 11:00,,PT_Normal,,,,,1Ec5uSPJQyqpxPHEHxCzig,3UVcuisrKUWSEpA6IokrnA,,,Y,0,0,,,2014-02-17 15:27,2014-03-01 17:03,admin,admin,
1385,128183,6764,35374,6640,0,N,N,N,CP_Drtn,TT_Task,DT_FixedDrtn,TK_NotStart,HHI.1223,Quality Check,,0,0,10,0,0,0,10,0,0,0,,,,2014-08-27 11:00,2014-08-28 11:00,,2014-08-27 11:00,2014-08-28 11:00,2014-08-27 11:00,2014-08-28 11:00,2014-08-27 11:00,2014-08-28 11:00,2014-08-27 11:00,2014-08-28 11:00,,PT_Normal,,,,,qYA4yhb+Qb+7umkHfnYeIQ,DK8tyciL7UeedncZlzgGNw,,,Y,0,0,,,2014-02-17 15:27,2014-03-01 17:03,admin,admin,
1386,128184,6764,35376,6640,0,N,N,N,CP_Drtn,TT_Task,DT_FixedDrtn,TK_NotStart,HHI.1224,Mechanical Completion (MCC) & Final Isnpection Before Hydrotesting,,0,0,10,0,16,16,10,40,0,40,,,,2014-08-03 16:00,2014-08-04 16:00,,2014-08-03 16:00,2014-08-04 16:00,2014-08-03 16:00,2014-08-04 16:00,2014-08-03 16:00,2014-08-04 16:00,2014-08-03 16:00,2014-08-04 16:00,,PT_Normal,,,,,sjPDjlxITE2KeFxb4V+YOg,xONAK+hKSFm7ujAE4ajU/g,,,Y,0,0,,,2014-02-17 15:27,2014-03-01 17:06,admin,admin,
1387,128185,6764,35377,6640,0,N,N,N,CP_Drtn,TT_Task,DT_FixedDrtn,TK_NotStart,HHI.1225,Mechanical Completion (MCC) & Final Inspection Before Hydrotesting,,0,0,10,0,24,24,10,40,0,40,,,,2014-08-28 11:00,2014-08-29 13:30,,2014-08-28 11:00,2014-08-29 13:30,2014-08-28 11:00,2014-08-29 13:30,2014-08-28 11:00,2014-08-29 13:30,2014-08-28 11:00,2014-08-29 13:30,,PT_Normal,,,,,26/ZOgk+ST6+tVwNNXoprA,gJMJdJtoSgitX+Fp18j6fw,,,Y,0,0,,,2014-02-17 15:27,2014-03-01 17:03,admin,admin,
1388,128186,6764,35379,6640,0,N,N,N,CP_Drtn,TT_Task,DT_FixedDrtn,TK_NotStart,HHI.1185,"Erect, install Girders to Columns (1 Layers ,5 Girders)",,0,0,20,0,341.333331,341.333331,20,17.066666,0,17.066666,,,,2014-06-28 09:00,2014-07-01 11:00,,2014-06-28 09:00,2014-07-01 11:00,2014-06-28 09:00,2014-07-01 11:00,2014-06-28 09:00,2014-07-01 11:00,2014-06-28 09:00,2014-07-01 11:00,,PT_Normal,,,,,hfGX8etHT0+E+bdlEmwy3g,VvaMiLZ3RAec+fg22SUkUA,,,Y,0,0,,,2014-02-17 15:27,2014-03-01 14:49,admin,admin,
1389,128187,6764,35380,6640,0,N,N,N,CP_Drtn,TT_Task,DT_FixedDrtn,TK_NotStart,HHI.1186,"Erect,& Install the Rafters (85 Rafters)/ Install Internal Piping Brackets/Piping",,0,0,50,0,1343.999994,1343.999994,50,17.066666,0,17.066666,,,,2014-06-29 13:00,2014-07-08 15:00,,2014-06-29 13:00,2014-07-08 15:00,2014-06-29 13:00,2014-07-08 15:00,2014-06-29 13:00,2014-07-08 15:00,2014-06-29 13:00,2014-07-08 15:00,,PT_Normal,,,,,V6Ambwb1Q8KQ6HsHoANRnw,kWd0PmqKTkONau9xeEp5/Q,,,Y,0,0,,,2014-02-17 15:27,2014-03-01 14:49,admin,admin,
1390,128188,6764,35381,6640,0,N,N,N,CP_Drtn,TT_Task,DT_FixedDrtn,TK_NotStart,HHI.1189,Prepare/Lay Down Roof Plates (38 Plates),,0,0,20,0,864.000004,864.000004,20,17.066667,0,17.066667,,,,2014-07-05 13:00,2014-07-08 15:00,,2014-07-05 13:00,2014-07-08 15:00,2014-07-05 13:00,2014-07-08 15:00,2014-07-05 13:00,2014-07-08 15:00,2014-07-05 13:00,2014-07-08 15:00,,PT_Normal,,,,,ZrQaNw0iQAqV+WJZueCEWw,yaug2E1oTX++PxDKXpPz/g,,,Y,0,0,,,2014-02-17 15:27,2014-03-01 14:49,admin,admin,
1391,128189,6764,35381,6640,0,N,N,N,CP_Drtn,TT_Task,DT_FixedDrtn,TK_NotStart,HHI.1190,Tacking of Roof Plates,,0,0,20,0,968,968,20,0,0,0,,,,2014-07-05 13:00,2014-07-08 15:00,,2014-07-05 13:00,2014-07-08 15:00,2014-07-05 13:00,2014-07-08 15:00,2014-07-05 13:00,2014-07-08 15:00,2014-07-05 13:00,2014-07-08 15:00,,PT_Normal,,,,,Y6tEJTvYRBKTkLvJzgAxIw,nU6ntAuDTyGQEMg77FJ+wA,,,Y,0,0,,,2014-02-17 15:27,2014-03-01 14:49,admin,admin,
1392,128190,6764,35381,6640,0,N,N,N,CP_Drtn,TT_Task,DT_FixedDrtn,TK_NotStart,HHI.1192,Welding of Roof Plates (Short Seams),,0,0,20,0,544,544,20,128,0,128,,,,2014-07-09 09:00,2014-07-13 11:00,,2014-07-09 09:00,2014-07-13 11:00,2014-07-09 09:00,2014-07-13 11:00,2014-07-09 09:00,2014-07-13 11:00,2014-07-09 09:00,2014-07-13 11:00,,PT_Normal,,,,,C7RL4hu3TJGrS1+Ug3aC0Q,lOaPZbaGRNm99bKlOQtD1w,,,Y,0,0,,,2014-02-17 15:27,2014-03-01 14:49,admin,admin,
1393,128191,6764,35381,6640,0,N,N,N,CP_Drtn,TT_Task,DT_FixedDrtn,TK_NotStart,HHI.1193,Welding of Roof Plates (Long Seams),,0,0,30,0,1728.000001,1728.000001,30,249.6,0,249.6,,,,2014-07-13 11:00,2014-07-19 11:00,,2014-07-13 11:00,2014-07-19 11:00,2014-07-13 11:00,2014-07-19 11:00,2014-07-13 11:00,2014-07-19 11:00,2014-07-13 11:00,2014-07-19 11:00,,PT_Normal,,,,,mlX1Af3VSGCTuRmbD6rRPQ,cwQbwNuoTLeV1nYINHd/XQ,,,Y,0,0,,,2014-02-17 15:27,2014-03-01 14:49,admin,admin,
1394,128192,6764,35381,6640,0,N,N,N,CP_Drtn,TT_Task,DT_FixedDrtn,TK_NotStart,HHI.1191,Tack of Roof Plates to Curb Angle,,40,40,10,0,416,416,10,0,0,0,,,,2014-07-16 13:00,2014-07-19 11:00,,2014-07-09 09:00,2014-07-10 13:00,2014-07-09 09:00,2014-07-10 13:00,2014-07-09 09:00,2014-07-10 13:00,2014-07-16 13:00,2014-07-19 11:00,,PT_Normal,,,,,HVdcYXj8S8iudj67Nvxsqw,Vz+NMYIsQ8OC+OuHlrH5Qg,,,N,0,0,,,2014-02-17 15:27,2014-03-01 14:49,admin,admin,
1395,128193,6764,35381,6640,0,N,N,N,CP_Drtn,TT_Task,DT_FixedDrtn,TK_NotStart,HHI.1194,Welding of Roof Plates to Curb Angle,,0,0,10,0,608.000003,608.000003,10,85.333333,0,85.333333,,,,2014-07-19 11:00,2014-07-20 15:00,,2014-07-19 11:00,2014-07-20 15:00,2014-07-19 11:00,2014-07-20 15:00,2014-07-19 11:00,2014-07-20 15:00,2014-07-19 11:00,2014-07-20 15:00,,PT_Normal,,,,,Avb3OeM0QLGv/mnPc+m/uQ,Tiub6DMKT7qcCORrGs6Naw,,,Y,0,0,,,2014-02-17 15:27,2014-03-01 14:49,admin,admin,
1396,128194,6764,35381,6640,0,N,N,N,CP_Drtn,TT_Task,DT_FixedDrtn,TK_NotStart,HHI.1197,"Quailty Check (Visual Inspection& Vaccum Box Test,PT,Air Leak Test for Roof Manholes& Nozzles))",,0,0,110,0,27.111111,27.111111,110,33.066667,0,33.066667,,,,2014-07-05 13:00,2014-07-26 15:00,,2014-07-05 13:00,2014-07-26 15:00,2014-07-05 13:00,2014-07-26 15:00,2014-07-05 13:00,2014-07-26 15:00,2014-07-05 13:00,2014-07-26 15:00,,PT_Normal,,,,,QY7Cy/ctSpqmLZO12N5Obg,UKV7MRaKQD+PPWimBFGXsQ,,,Y,0,0,,,2014-02-17 15:27,2014-03-01 14:49,admin,admin,
1397,128195,6764,35381,6640,0,N,N,N,CP_Drtn,TT_Task,DT_FixedDrtn,TK_NotStart,HHI.1195,"Fit,Weld Manholes ,Nozzles & install Top Platform Supports on Roof",,0,0,20,0,0,0,20,0,0,0,,,,2014-07-22 13:00,2014-07-26 15:00,,2014-07-22 13:00,2014-07-26 15:00,2014-07-22 13:00,2014-07-26 15:00,2014-07-22 13:00,2014-07-26 15:00,2014-07-22 13:00,2014-07-26 15:00,,PT_Normal,,,,,NHoMr6ksQbWxBV+YQ5QMbQ,kwVagvVoZ0mZIAWkn3VOig,,,Y,0,0,,,2014-02-17 15:27,2014-03-01 14:49,admin,admin,
1398,128196,6764,35381,6640,0,N,N,N,CP_Drtn,TT_Task,DT_FixedDrtn,TK_NotStart,HHI.1196,Weld Internal Piping to Nozzle N1,,0,0,10,0,0,0,10,0,0,0,,,,2014-07-24 11:00,2014-07-26 15:00,,2014-07-24 11:00,2014-07-26 15:00,2014-07-24 11:00,2014-07-26 15:00,2014-07-24 11:00,2014-07-26 15:00,2014-07-24 11:00,2014-07-26 15:00,,PT_Normal,,,,,LYnrnd8rQtSZXmR21ijxjg,PF9Bglt11Eu6z+CjIhFQ9w,,,Y,0,0,,,2014-02-17 15:27,2014-03-01 14:49,admin,admin,
1399,128197,6764,35382,6640,0,N,N,N,CP_Drtn,TT_Task,DT_FixedDrtn,TK_NotStart,HHI.1178,"""""Fit & Tack 
Shell Course # 8 & Top Curb Angle",,0,0,20,0,255.999999,255.999999,20,8.533333,0,8.533333,,,,2014-06-25 07:00,2014-06-26 17:00,,2014-06-25 07:00,2014-06-26 17:00,2014-06-25 07:00,2014-06-26 17:00,2014-06-25 07:00,2014-06-26 17:00,2014-06-25 07:00,2014-06-26 17:00,,PT_Normal,,,,,lQUFZNblScqmhfFaBi/mtw,4fRUXfheRh2bqNGfeOIUtA,,,Y,0,0,,,2014-02-17 15:27,2014-03-01 14:49,admin,admin,
1400,128198,6764,35382,6640,0,N,N,N,CP_Drtn,TT_Task,DT_FixedDrtn,TK_NotStart,HHI.1179,Weld Outer Horizontal Seam between Shell Course # 8 & Top Curb Angle,,10,0,10,0,128,128,10,33.066667,0,33.066667,,,,2014-06-29 13:00,2014-07-01 11:00,,2014-06-28 09:00,2014-06-29 13:00,2014-06-28 09:00,2014-06-29 13:00,2014-06-28 09:00,2014-06-29 13:00,2014-06-29 13:00,2014-07-01 11:00,,PT_Normal,,,,,kDHPwBgsR1aXa/8nh0M66w,JvvGVt45RRCRe/PZV/zULQ,,,N,0,0,,,2014-02-17 15:27,2014-03-01 14:49,admin,admin,
1401,128199,6764,35382,6640,0,N,N,N,CP_Drtn,TT_Task,DT_FixedDrtn,TK_NotStart,HHI.1180,"""""Backgouge & NDT Inside Horizontal Seam between Shell Course# 8 & Top Curb Angle",,10,10,10,0,90,90,10,33.066667,0,33.066667,,,,2014-06-29 13:00,2014-07-01 11:00,,2014-06-28 09:00,2014-06-29 13:00,2014-06-28 09:00,2014-06-29 13:00,2014-06-28 09:00,2014-06-29 13:00,2014-06-29 13:00,2014-07-01 11:00,,PT_Normal,,,,,9McWxmiQQ7+rLFc+iX60HQ,1JBzkU6KTAGLZW/N67m4PQ,,,N,0,0,,,2014-02-17 15:27,2014-03-01 14:49,admin,admin,
1402,128200,6764,35382,6640,0,N,N,N,CP_Drtn,TT_Task,DT_FixedDrtn,TK_NotStart,HHI.1182,Weld Inner Horizontal Seam between Shell Course #8 & Top Curb Angle,,0,0,10,0,191.333334,191.333334,10,33.066667,0,33.066667,,,,2014-07-01 11:00,2014-07-02 15:00,,2014-07-01 11:00,2014-07-02 15:00,2014-07-01 11:00,2014-07-02 15:00,2014-07-01 11:00,2014-07-02 15:00,2014-07-01 11:00,2014-07-02 15:00,,PT_Normal,,,,,L/h6VcG0Q8KAXIscslo4sQ,xkyR5i0PQ/mxms0CJVabfg,,,Y,0,0,,,2014-02-17 15:27,2014-03-01 14:49,admin,admin,
1403,128201,6764,35382,6640,0,N,N,N,CP_Drtn,TT_Task,DT_FixedDrtn,TK_NotStart,HHI.1184,Quailty Check (Visual Inspection),,0,0,50,0,42.666664,42.666664,50,42.666667,0,42.666667,,,,2014-06-25 07:00,2014-07-02 15:00,,2014-06-25 07:00,2014-07-02 15:00,2014-06-25 07:00,2014-07-02 15:00,2014-06-25 07:00,2014-07-02 15:00,2014-06-25 07:00,2014-07-02 15:00,,PT_Normal,,,,,yxTlKrxwTumcDTugvc5l+A,puuHkI7GSieHTAHzZ+Lr6Q,,,Y,0,0,,,2014-02-17 15:27,2014-03-01 14:49,admin,admin,
1404,128202,6764,35382,6640,0,N,N,N,CP_Drtn,TT_Task,DT_FixedDrtn,TK_NotStart,HHI.1181,"Fit up,Tack of Gusset Plates to Shell",,0,0,20,0,341.333337,341.333337,20,17.066667,0,17.066667,,,,2014-06-28 09:00,2014-07-01 11:00,,2014-06-28 09:00,2014-07-01 11:00,2014-06-28 09:00,2014-07-01 11:00,2014-06-28 09:00,2014-07-01 11:00,2014-06-28 09:00,2014-07-01 11:00,,PT_Normal,,,,,BMUx1wabRWOlW96t7m07kQ,WRu6BV2mTceP+d9OQ5RfBA,,,Y,0,0,,,2014-02-17 15:27,2014-03-01 14:49,admin,admin,
1405,128203,6764,35382,6640,0,N,N,N,CP_Drtn,TT_Task,DT_FixedDrtn,TK_NotStart,HHI.1183,Welding of Gusset Plates,,0,0,10,0,202.666668,202.666668,10,85.333333,0,85.333333,,,,2014-07-01 11:00,2014-07-02 15:00,,2014-07-01 11:00,2014-07-02 15:00,2014-07-01 11:00,2014-07-02 15:00,2014-07-01 11:00,2014-07-02 15:00,2014-07-01 11:00,2014-07-02 15:00,,PT_Normal,,,,,AKm7vUlqRx6EpKn3PCAygQ,Lx6/tZJQQuqoYcNDllu+pg,,,Y,0,0,,,2014-02-17 15:27,2014-03-01 14:49,admin,admin,
1406,128204,6764,35383,6640,0,N,N,N,CP_Drtn,TT_Task,DT_FixedDrtn,TK_NotStart,HHI.1198,Erect & Install Stairways & Platforms for Shell,,0,0,20,0,341.333337,341.333337,20,17.066667,0,17.066667,,,,2014-07-27 09:00,2014-07-31 11:00,,2014-07-27 09:00,2014-07-31 11:00,2014-07-27 09:00,2014-07-31 11:00,2014-07-27 09:00,2014-07-31 11:00,2014-07-27 09:00,2014-07-31 11:00,,PT_Normal,,,,,50Gssip/T3OIJzdftMzdfg,8luPrszbRvCO9llbnOtarw,,,Y,0,0,,,2014-02-17 15:27,2014-03-01 14:49,admin,admin,
1407,128205,6764,35383,6640,0,N,N,N,CP_Drtn,TT_Task,DT_FixedDrtn,TK_NotStart,HHI.1199,Erect & Install Stairways & Platforms & Handrails for Roof,,0,0,20,0,341.333337,341.333337,20,17.066667,0,17.066667,,,,2014-07-31 11:00,2014-08-02 16:00,,2014-07-31 11:00,2014-08-02 16:00,2014-07-31 11:00,2014-08-02 16:00,2014-07-31 11:00,2014-08-02 16:00,2014-07-31 11:00,2014-08-02 16:00,,PT_Normal,,,,,R6Lx6FJTTICnLE8m9w87Cg,JC++5UrkQX+zfYQ2erpMKw,,,Y,0,0,,,2014-02-17 15:27,2014-03-01 14:49,admin,admin,
1408,128206,6764,35383,6640,0,N,N,N,CP_Drtn,TT_Task,DT_FixedDrtn,TK_NotStart,HHI.1200,Quality Check,,0,0,10,0,0,0,10,0,0,0,,,,2014-08-02 16:00,2014-08-03 16:00,,2014-08-02 16:00,2014-08-03 16:00,2014-08-02 16:00,2014-08-03 16:00,2014-08-02 16:00,2014-08-03 16:00,2014-08-02 16:00,2014-08-03 16:00,,PT_Normal,,,,,CaPP/mmoSP2MHM/Q2/vGoQ,PP9WkB+s00WruaxVYjqKcA,,,Y,0,0,,,2014-02-17 15:27,2014-03-01 14:49,admin,admin,
1409,128207,6764,35385,6640,0,N,N,N,CP_Drtn,TT_Task,DT_FixedDrtn,TK_NotStart,HHI.1041,Perform RT for Tank#1 & #2,,0,0,10,0,0,0,10,0,0,0,,,,2014-03-22 07:00,2014-03-22 17:00,,2014-03-22 07:00,2014-03-22 17:00,2014-03-22 07:00,2014-03-22 17:00,2014-03-22 07:00,2014-03-22 17:00,2014-03-22 07:00,2014-03-22 17:00,,PT_Normal,,,,,fZihiCIGSiaHP31ouSwUvw,fblkQIEz9UaACAlKeVUFvg,,,Y,0,0,,,2014-02-17 15:27,2014-03-01 14:49,admin,admin,
1410,128208,6764,35386,6640,0,N,N,N,CP_Drtn,TT_Task,DT_FixedDrtn,TK_NotStart,HHI.1034,Erect & Tack Shell Course # 1 &Install Stagging Brackets,,0,0,20,0,420,420,20,48,0,48,,,,2014-03-16 07:00,2014-03-17 17:00,,2014-03-16 07:00,2014-03-17 17:00,2014-03-16 07:00,2014-03-17 17:00,2014-03-16 07:00,2014-03-17 17:00,2014-03-16 07:00,2014-03-17 17:00,,PT_Normal,,,,,4TiTi/7pRGaQl4bFd+RMPQ,k57uS/yKQtOz525kIFvO8w,,,Y,0,0,,,2014-02-17 15:27,2014-03-01 14:49,admin,admin,
1411,128209,6764,35386,6640,0,N,N,N,CP_Drtn,TT_Task,DT_FixedDrtn,TK_NotStart,HHI.1037,Weld Outer Vertical Seam/Install the Stairways support on Shell,,0,0,10,0,290.133334,290.133334,10,85.333334,0,85.333334,,,,2014-03-17 07:00,2014-03-17 17:00,,2014-03-17 07:00,2014-03-17 17:00,2014-03-17 07:00,2014-03-17 17:00,2014-03-17 07:00,2014-03-17 17:00,2014-03-17 07:00,2014-03-17 17:00,,PT_Normal,,,,,R+DcJ7PJQ+yqeKcRmnT5fA,AbHns7/8SnmlpdNlV/XoVA,,,Y,0,0,,,2014-02-17 15:27,2014-03-01 14:49,admin,admin,
1412,128210,6764,35386,6640,0,N,N,N,CP_Drtn,TT_Task,DT_FixedDrtn,TK_NotStart,HHI.1038,"Backgouge,Grinding & NDT Inside Vertical Seam",,0,0,10,0,87.111111,87.111111,10,33.066667,0,33.066667,,,,2014-03-18 07:00,2014-03-18 17:00,,2014-03-18 07:00,2014-03-18 17:00,2014-03-18 07:00,2014-03-18 17:00,2014-03-18 07:00,2014-03-18 17:00,2014-03-18 07:00,2014-03-18 17:00,,PT_Normal,,,,,tXkdfTClT62a1See9B4CYg,wXNoTIqHRB+Q7YGirtRAlw,,,Y,0,0,,,2014-02-17 15:27,2014-03-01 14:49,admin,admin,
1413,128211,6764,35386,6640,0,N,N,N,CP_Drtn,TT_Task,DT_FixedDrtn,TK_NotStart,HHI.1039,Weld Inside Vertical Seam,,0,0,10,0,192.000001,192.000001,10,85.333334,0,85.333334,,,,2014-03-19 07:00,2014-03-19 17:00,,2014-03-19 07:00,2014-03-19 17:00,2014-03-19 07:00,2014-03-19 17:00,2014-03-19 07:00,2014-03-19 17:00,2014-03-19 07:00,2014-03-19 17:00,,PT_Normal,,,,,EUH9q7u1TGeMHBcqfSYrEg,9QrVb91mQcS2oag/EzUbEw,,,Y,0,0,,,2014-02-17 15:27,2014-03-01 14:49,admin,admin,
1414,128212,6764,35386,6640,0,N,N,N,CP_Drtn,TT_Task,DT_FixedDrtn,TK_NotStart,HHI.1035,"Quailty Check(Visual Inspection  PT,Air Leak Test for Shell Manholes& Nozzles)",,0,0,50,0,21.333333,21.333333,50,33.066667,0,33.066667,,,,2014-03-16 07:00,2014-03-20 17:00,,2014-03-16 07:00,2014-03-20 17:00,2014-03-16 07:00,2014-03-20 17:00,2014-03-16 07:00,2014-03-20 17:00,2014-03-16 07:00,2014-03-20 17:00,,PT_Normal,,,,,bxOOnUmkQZSc/EPrqwQSwA,VZBdykufRgq+asB9VQCV7A,,,Y,0,0,,,2014-02-17 15:27,2014-03-01 14:49,admin,admin,
1415,128213,6764,35386,6640,0,N,N,N,CP_Drtn,TT_Task,DT_FixedDrtn,TK_NotStart,HHI.1036,Fit up/Tack Shell #1 to Annular Plate,,0,0,10,0,0,0,10,0,0,0,,,,2014-03-17 07:00,2014-03-17 17:00,,2014-03-17 07:00,2014-03-17 17:00,2014-03-17 07:00,2014-03-17 17:00,2014-03-17 07:00,2014-03-17 17:00,2014-03-17 07:00,2014-03-17 17:00,,PT_Normal,,,,,K86u2ftRQy2Itv+9LDPOcQ,P7n9mAPu4E6wi7Z8ekE0cg,,,Y,0,0,,,2014-02-17 15:27,2014-03-01 14:49,admin,admin,
1416,128214,6764,35386,6640,0,N,N,N,CP_Drtn,TT_Task,DT_FixedDrtn,TK_NotStart,HHI.1040,"Fit,Weld for Manhole ,Nozzles on Shell",,0,0,20,0,0,0,20,0,0,0,,,,2014-03-19 07:00,2014-03-20 17:00,,2014-03-19 07:00,2014-03-20 17:00,2014-03-19 07:00,2014-03-20 17:00,2014-03-19 07:00,2014-03-20 17:00,2014-03-19 07:00,2014-03-20 17:00,,PT_Normal,,,,,ArRwTi7CQXqatcgFXug2Ag,ZCZBLSmadEe64LuCPyec7g,,,Y,0,0,,,2014-02-17 15:27,2014-03-01 14:49,admin,admin,
1417,128215,6764,35387,6640,0,N,N,N,CP_Drtn,TT_Task,DT_FixedDrtn,TK_NotStart,HHI.1027,Erect & Tack Shell Course # 1 & Install Stagging Brackets,,0,0,20,0,420,420,20,48,0,48,,,,2014-03-13 07:00,2014-03-15 17:00,,2014-03-13 07:00,2014-03-15 17:00,2014-03-13 07:00,2014-03-15 17:00,2014-03-13 07:00,2014-03-15 17:00,2014-03-13 07:00,2014-03-15 17:00,,PT_Normal,,,,,qLrAQ3oESYaPtFDCHFxRbA,s5zhiuSATeqG2jTLPTEhQw,,,Y,0,0,,,2014-02-17 15:27,2014-03-01 14:49,admin,admin,
1418,128216,6764,35387,6640,0,N,N,N,CP_Drtn,TT_Task,DT_FixedDrtn,TK_NotStart,HHI.1030,Weld Outer Vertical Seam/Install the Stairways support on Shell,,0,0,10,0,400,400,10,80,0,80,,,,2014-03-15 07:00,2014-03-15 17:00,,2014-03-15 07:00,2014-03-15 17:00,2014-03-15 07:00,2014-03-15 17:00,2014-03-15 07:00,2014-03-15 17:00,2014-03-15 07:00,2014-03-15 17:00,,PT_Normal,,,,,J+QRdao0Q/+txMEy8uPs7g,pHTagyh0QIuA0TUp0IGvhg,,,Y,0,0,,,2014-02-17 15:27,2014-03-01 14:49,admin,admin,
1419,128217,6764,35387,6640,0,N,N,N,CP_Drtn,TT_Task,DT_FixedDrtn,TK_NotStart,HHI.1031,"Backgouge,Grinding & NDT Inside Vertical Seam",,0,0,10,0,90,90,10,33.066667,0,33.066667,,,,2014-03-16 07:00,2014-03-16 17:00,,2014-03-16 07:00,2014-03-16 17:00,2014-03-16 07:00,2014-03-16 17:00,2014-03-16 07:00,2014-03-16 17:00,2014-03-16 07:00,2014-03-16 17:00,,PT_Normal,,,,,fGGmlo+6RiSuDJF3zB6Y4w,gcuvXhrSRhG+jNLyE8ZpdQ,,,Y,0,0,,,2014-02-17 15:27,2014-03-01 14:49,admin,admin,
1420,128218,6764,35387,6640,0,N,N,N,CP_Drtn,TT_Task,DT_FixedDrtn,TK_NotStart,HHI.1032,Weld Inside Vertical Seam,,0,0,10,0,181.333334,181.333334,10,85.333334,0,85.333334,,,,2014-03-17 07:00,2014-03-17 17:00,,2014-03-17 07:00,2014-03-17 17:00,2014-03-17 07:00,2014-03-17 17:00,2014-03-17 07:00,2014-03-17 17:00,2014-03-17 07:00,2014-03-17 17:00,,PT_Normal,,,,,b/1z5FtnQ+OINh9/JwnSAQ,xVg/IaTfRimmmOqjCNcvFg,,,Y,0,0,,,2014-02-17 15:27,2014-03-01 14:49,admin,admin,
1421,128219,6764,35387,6640,0,N,N,N,CP_Drtn,TT_Task,DT_FixedDrtn,TK_NotStart,HHI.1028,"Quailty Check(Visual Inspection & PT,Air Leak Test for Shell Manholes& Nozzles)",,0,0,50,0,27.111111,27.111111,50,33.066667,0,33.066667,,,,2014-03-13 07:00,2014-03-18 17:00,,2014-03-13 07:00,2014-03-18 17:00,2014-03-13 07:00,2014-03-18 17:00,2014-03-13 07:00,2014-03-18 17:00,2014-03-13 07:00,2014-03-18 17:00,,PT_Normal,,,,,CB0FQE3mQp6BIhszgkztvA,KfRUdINiRHSPJb3Ee1lgiw,,,Y,0,0,,,2014-02-17 15:27,2014-03-01 14:49,admin,admin,
1422,128220,6764,35387,6640,0,N,N,N,CP_Drtn,TT_Task,DT_FixedDrtn,TK_NotStart,HHI.1029,Fit up/Tack Shell #1 to Annular Plate,,0,0,10,0,0,0,10,0,0,0,,,,2014-03-15 07:00,2014-03-15 17:00,,2014-03-15 07:00,2014-03-15 17:00,2014-03-15 07:00,2014-03-15 17:00,2014-03-15 07:00,2014-03-15 17:00,2014-03-15 07:00,2014-03-15 17:00,,PT_Normal,,,,,gkzK2rSySnakriBoYdpXeg,cFX/3TGDH0OaFBWa611yJA,,,Y,0,0,,,2014-02-17 15:27,2014-03-01 14:49,admin,admin,
1423,128221,6764,35387,6640,0,N,N,N,CP_Drtn,TT_Task,DT_FixedDrtn,TK_NotStart,HHI.1033,"Fit,Weld for Manhole ,Nozzles on Shell",,0,0,20,0,0,0,20,0,0,0,,,,2014-03-17 07:00,2014-03-18 17:00,,2014-03-17 07:00,2014-03-18 17:00,2014-03-17 07:00,2014-03-18 17:00,2014-03-17 07:00,2014-03-18 17:00,2014-03-17 07:00,2014-03-18 17:00,,PT_Normal,,,,,4rByuN+KTg2VOlF19FU0ig,qJpWPpbWVU+rYAyNWohVHg,,,Y,0,0,,,2014-02-17 15:27,2014-03-01 14:49,admin,admin,
1424,128222,6764,35389,6640,0,N,N,N,CP_Drtn,TT_Task,DT_FixedDrtn,TK_NotStart,HHI.1073,Erect & Tack Shell Course # 3 & Install Stagging Brackets,,0,0,10,0,560,560,10,48,0,48,,,,2014-04-12 07:00,2014-04-12 17:00,,2014-04-12 07:00,2014-04-12 17:00,2014-04-12 07:00,2014-04-12 17:00,2014-04-12 07:00,2014-04-12 17:00,2014-04-12 07:00,2014-04-12 17:00,,PT_Normal,,,,,wDOMMZLzRNmFgwvdjPKHiw,2dz1oYikTD+qKYbUn5l5pg,,,Y,0,0,,,2014-02-17 15:27,2014-03-01 14:49,admin,admin,
1425,128223,6764,35389,6640,0,N,N,N,CP_Drtn,TT_Task,DT_FixedDrtn,TK_NotStart,HHI.1074,Weld Outer Vertical Seam/Install the Stairways support on Shell,,0,0,10,0,202.666668,202.666668,10,85.333333,0,85.333333,,,,2014-04-13 07:00,2014-04-13 17:00,,2014-04-13 07:00,2014-04-13 17:00,2014-04-13 07:00,2014-04-13 17:00,2014-04-13 07:00,2014-04-13 17:00,2014-04-13 07:00,2014-04-13 17:00,,PT_Normal,,,,,TcsJc3plRtetyelWYxfCBQ,b81FzLBRR7unUoZULIC4SA,,,Y,0,0,,,2014-02-17 15:27,2014-03-01 14:49,admin,admin,
1426,128224,6764,35389,6640,0,N,N,N,CP_Drtn,TT_Task,DT_FixedDrtn,TK_NotStart,HHI.1075,Backgouge & NDT Inside Vertical Seam,,0,0,10,0,108.444444,108.444444,10,33.066667,0,33.066667,,,,2014-04-14 07:00,2014-04-14 17:00,,2014-04-14 07:00,2014-04-14 17:00,2014-04-14 07:00,2014-04-14 17:00,2014-04-14 07:00,2014-04-14 17:00,2014-04-14 07:00,2014-04-14 17:00,,PT_Normal,,,,,yKmLo+mhQFybvPDI4xI/+w,1wLJNBaISCuWLUiygZ+70Q,,,Y,0,0,,,2014-02-17 15:27,2014-03-01 14:49,admin,admin,
1427,128225,6764,35389,6640,0,N,N,N,CP_Drtn,TT_Task,DT_FixedDrtn,TK_NotStart,HHI.1076,Weld Inside Vertical Seam,,0,0,10,0,202.666668,202.666668,10,85.333333,0,85.333333,,,,2014-04-15 07:00,2014-04-15 17:00,,2014-04-15 07:00,2014-04-15 17:00,2014-04-15 07:00,2014-04-15 17:00,2014-04-15 07:00,2014-04-15 17:00,2014-04-15 07:00,2014-04-15 17:00,,PT_Normal,,,,,ndwaE82dQN6HgHBGmmAp1A,i55pPxlrRnOySjeT/tCHGQ,,,Y,0,0,,,2014-02-17 15:27,2014-03-01 14:49,admin,admin,
1428,128226,6764,35389,6640,0,N,N,N,CP_Drtn,TT_Task,DT_FixedDrtn,TK_NotStart,HHI.1077,"Weld Outer Horizontal Seam between Shell Course # 2 & 3""""",,0,0,20,0,608,608,20,128,0,128,,,,2014-04-16 07:00,2014-04-17 17:00,,2014-04-16 07:00,2014-04-17 17:00,2014-04-16 07:00,2014-04-17 17:00,2014-04-16 07:00,2014-04-17 17:00,2014-04-16 07:00,2014-04-17 17:00,,PT_Normal,,,,,KnRR9OfaToeV7QoYwFEKzQ,5sSik256QDa8r1CkbUoxjw,,,Y,0,0,,,2014-02-17 15:27,2014-03-01 14:49,admin,admin,
1429,128227,6764,35389,6640,0,N,N,N,CP_Drtn,TT_Task,DT_FixedDrtn,TK_NotStart,HHI.1078,"Backgouge & NDT Inside Horizontal Seam between Shell Course# 2 & 3""""",,0,0,10,0,108.444444,108.444444,10,33.066667,0,33.066667,,,,2014-04-19 07:00,2014-04-19 17:00,,2014-04-19 07:00,2014-04-19 17:00,2014-04-19 07:00,2014-04-19 17:00,2014-04-19 07:00,2014-04-19 17:00,2014-04-19 07:00,2014-04-19 17:00,,PT_Normal,,,,,7UdrBPMqR16fIskGd7/yBw,oScK5bz0QuGOsz1xLzqf7g,,,Y,0,0,,,2014-02-17 15:27,2014-03-01 14:49,admin,admin,
1430,128228,6764,35389,6640,0,N,N,N,CP_Drtn,TT_Task,DT_FixedDrtn,TK_NotStart,HHI.1079,"Weld Inner Horizontal Seam between Shell Course # 2 & 3""""",,0,0,10,0,608,608,10,128,0,128,,,,2014-04-20 07:00,2014-04-20 17:00,,2014-04-20 07:00,2014-04-20 17:00,2014-04-20 07:00,2014-04-20 17:00,2014-04-20 07:00,2014-04-20 17:00,2014-04-20 07:00,2014-04-20 17:00,,PT_Normal,,,,,6D4Fv2aJTbSl1QjmA/MoCA,jHCz8XrHTkuWOvxFJfIXfQ,,,Y,0,0,,,2014-02-17 15:27,2014-03-01 14:49,admin,admin,
1431,128229,6764,35389,6640,0,N,N,N,CP_Drtn,TT_Task,DT_FixedDrtn,TK_NotStart,HHI.1080,Quailty Check(Visual Inspection),,0,0,80,0,32,32,80,42.666666,0,42.666666,,,,2014-04-12 07:00,2014-04-20 17:00,,2014-04-12 07:00,2014-04-20 17:00,2014-04-12 07:00,2014-04-20 17:00,2014-04-12 07:00,2014-04-20 17:00,2014-04-12 07:00,2014-04-20 17:00,,PT_Normal,,,,,vNBKRuNoQjWXpDUb1Um2Pw,94nWQnmQQbmZsEpHP4PsDQ,,,Y,0,0,,,2014-02-17 15:27,2014-03-01 14:49,admin,admin,
1432,128230,6764,35390,6640,0,N,N,N,CP_Drtn,TT_Task,DT_FixedDrtn,TK_NotStart,HHI.1081,Perform RT for Tank#1 & #2,,0,0,10,0,0,0,10,0,0,0,,,,2014-04-21 07:00,2014-04-21 17:00,,2014-04-21 07:00,2014-04-21 17:00,2014-04-21 07:00,2014-04-21 17:00,2014-04-21 07:00,2014-04-21 17:00,2014-04-21 07:00,2014-04-21 17:00,,PT_Normal,,,,,lPh/aL5pQVm/XZQ8rPyd+w,aUP+CvH/Rk+3o/Lzz8hirw,,,Y,0,0,,,2014-02-17 15:27,2014-03-01 14:49,admin,admin,
1433,128231,6764,35391,6640,0,N,N,N,CP_Drtn,TT_Task,DT_FixedDrtn,TK_NotStart,HHI.1065,Erect & Tack Shell Course # 3 & Install Stagging Brackets,,0,0,10,0,500,500,10,48,0,48,,,,2014-04-09 07:00,2014-04-09 17:00,,2014-04-09 07:00,2014-04-09 17:00,2014-04-09 07:00,2014-04-09 17:00,2014-04-09 07:00,2014-04-09 17:00,2014-04-09 07:00,2014-04-09 17:00,,PT_Normal,,,,,42IBGS8fT4OiSG5iC6JXHg,Hz2/2CrFSEyjfCNLFS/qdw,,,Y,0,0,,,2014-02-17 15:27,2014-03-01 14:49,admin,admin,
1434,128232,6764,35391,6640,0,N,N,N,CP_Drtn,TT_Task,DT_FixedDrtn,TK_NotStart,HHI.1066,Weld Outer Vertical Seam/Install the Stairways support on Shell,,0,0,10,0,160,160,10,85.333334,0,85.333334,,,,2014-04-10 07:00,2014-04-10 17:00,,2014-04-10 07:00,2014-04-10 17:00,2014-04-10 07:00,2014-04-10 17:00,2014-04-10 07:00,2014-04-10 17:00,2014-04-10 07:00,2014-04-10 17:00,,PT_Normal,,,,,ZA/KD0lxRAeTX0cjunmKnQ,VxJcE5hBQUaQLsKUyxuEoA,,,Y,0,0,,,2014-02-17 15:27,2014-03-01 14:49,admin,admin,
1435,128233,6764,35391,6640,0,N,N,N,CP_Drtn,TT_Task,DT_FixedDrtn,TK_NotStart,HHI.1067,Backgouge & NDT Inside Vertical Seam,,0,0,10,0,80,80,10,33.066667,0,33.066667,,,,2014-04-12 07:00,2014-04-12 17:00,,2014-04-12 07:00,2014-04-12 17:00,2014-04-12 07:00,2014-04-12 17:00,2014-04-12 07:00,2014-04-12 17:00,2014-04-12 07:00,2014-04-12 17:00,,PT_Normal,,,,,/iQbsB3YTMmT7PjeD2X9mg,aznCFY3aTfaHQJ2QQcPEWg,,,Y,0,0,,,2014-02-17 15:27,2014-03-01 14:49,admin,admin,
1436,128234,6764,35391,6640,0,N,N,N,CP_Drtn,TT_Task,DT_FixedDrtn,TK_NotStart,HHI.1068,Weld Inside Vertical Seam,,0,0,10,0,202.666668,202.666668,10,85.333333,0,85.333333,,,,2014-04-13 07:00,2014-04-13 17:00,,2014-04-13 07:00,2014-04-13 17:00,2014-04-13 07:00,2014-04-13 17:00,2014-04-13 07:00,2014-04-13 17:00,2014-04-13 07:00,2014-04-13 17:00,,PT_Normal,,,,,MASSRy2RQgeXE0j06llgkg,/4pMBGHgS7qfoA8tArLxJA,,,Y,0,0,,,2014-02-17 15:27,2014-03-01 14:49,admin,admin,
1437,128235,6764,35391,6640,0,N,N,N,CP_Drtn,TT_Task,DT_FixedDrtn,TK_NotStart,HHI.1069,"Weld Outer Horizontal Seam between Shell Course # 2 & 3""""",,0,0,20,0,608,608,20,128,0,128,,,,2014-04-14 07:00,2014-04-15 17:00,,2014-04-14 07:00,2014-04-15 17:00,2014-04-14 07:00,2014-04-15 17:00,2014-04-14 07:00,2014-04-15 17:00,2014-04-14 07:00,2014-04-15 17:00,,PT_Normal,,,,,3Q41cQmxR2O3pmf7938c4A,x/NWNRuSSYSf+GCR2xU9Iw,,,Y,0,0,,,2014-02-17 15:27,2014-03-01 14:49,admin,admin,
1438,128236,6764,35391,6640,0,N,N,N,CP_Drtn,TT_Task,DT_FixedDrtn,TK_NotStart,HHI.1070,"Backgouge & NDT Inside Horizontal Seam between Shell Course# 2 & 3""""",,0,0,10,0,87.111111,87.111111,10,33.066667,0,33.066667,,,,2014-04-16 07:00,2014-04-16 17:00,,2014-04-16 07:00,2014-04-16 17:00,2014-04-16 07:00,2014-04-16 17:00,2014-04-16 07:00,2014-04-16 17:00,2014-04-16 07:00,2014-04-16 17:00,,PT_Normal,,,,,c4OOW7HyRemojnYfTgPqwA,pVoJfkPnTdWxibuJGr32lA,,,Y,0,0,,,2014-02-17 15:27,2014-03-01 14:49,admin,admin,
1439,128237,6764,35391,6640,0,N,N,N,CP_Drtn,TT_Task,DT_FixedDrtn,TK_NotStart,HHI.1071,"Weld Inner Horizontal Seam between Shell Course # 2 & 3""""",,0,0,10,0,608,608,10,128,0,128,,,,2014-04-17 07:00,2014-04-17 17:00,,2014-04-17 07:00,2014-04-17 17:00,2014-04-17 07:00,2014-04-17 17:00,2014-04-17 07:00,2014-04-17 17:00,2014-04-17 07:00,2014-04-17 17:00,,PT_Normal,,,,,nNL4KVeFS4ClyWKoUaa3Gg,Ris02MCgSLWW7QFKFBmSsQ,,,Y,0,0,,,2014-02-17 15:27,2014-03-01 14:49,admin,admin,
1440,128238,6764,35391,6640,0,N,N,N,CP_Drtn,TT_Task,DT_FixedDrtn,TK_NotStart,HHI.1072,Quailty Check(Visual Inspection),,0,0,80,0,27.111111,27.111111,80,33.066667,0,33.066667,,,,2014-04-09 07:00,2014-04-17 17:00,,2014-04-09 07:00,2014-04-17 17:00,2014-04-09 07:00,2014-04-17 17:00,2014-04-09 07:00,2014-04-17 17:00,2014-04-09 07:00,2014-04-17 17:00,,PT_Normal,,,,,U1y/eLgtSHa6CK0jhPKcVg,SrrmHBlxS0+XK3Si/7rdfg,,,Y,0,0,,,2014-02-17 15:27,2014-03-01 14:49,admin,admin,
1441,128239,6764,35393,6640,0,N,N,N,CP_Drtn,TT_Task,DT_FixedDrtn,TK_NotStart,HHI.1146,Erect & Tack Shell Course # 6 & Install Stagging Brackets,,0,0,10,0,380,380,10,48,0,48,,,,2014-06-04 07:00,2014-06-04 17:00,,2014-06-04 07:00,2014-06-04 17:00,2014-06-04 07:00,2014-06-04 17:00,2014-06-04 07:00,2014-06-04 17:00,2014-06-04 07:00,2014-06-04 17:00,,PT_Normal,,,,,r0NpoI58Sh+r6iRb/q5hfQ,doUl0GNQbkubHm8J3bcBnw,,,Y,0,0,,,2014-02-17 15:27,2014-03-01 14:49,admin,admin,
1442,128240,6764,35393,6640,0,N,N,N,CP_Drtn,TT_Task,DT_FixedDrtn,TK_NotStart,HHI.1147,Weld Outer Vertical Seam /Install the Stairways support on Shell,,0,0,10,0,160,160,10,42.666666,0,42.666666,,,,2014-06-05 07:00,2014-06-05 17:00,,2014-06-05 07:00,2014-06-05 17:00,2014-06-05 07:00,2014-06-05 17:00,2014-06-05 07:00,2014-06-05 17:00,2014-06-05 07:00,2014-06-05 17:00,,PT_Normal,,,,,E/wxAGP0SdCFMhLkMxZfqg,ssDxIBpK80CbnbeP7P0wfg,,,Y,0,0,,,2014-02-17 15:27,2014-03-01 14:49,admin,admin,
1443,128241,6764,35393,6640,0,N,N,N,CP_Drtn,TT_Task,DT_FixedDrtn,TK_NotStart,HHI.1148,Backgouge & NDT Inside Vertical Seam,,0,0,10,0,101.333332,101.333332,10,42.666666,0,42.666666,,,,2014-06-07 07:00,2014-06-07 17:00,,2014-06-07 07:00,2014-06-07 17:00,2014-06-07 07:00,2014-06-07 17:00,2014-06-07 07:00,2014-06-07 17:00,2014-06-07 07:00,2014-06-07 17:00,,PT_Normal,,,,,aaJndLhMR3228RaOlTMmgw,ErQvIHuYwUySJTKD4cWcug,,,Y,0,0,,,2014-02-17 15:27,2014-03-01 14:49,admin,admin,
1444,128242,6764,35393,6640,0,N,N,N,CP_Drtn,TT_Task,DT_FixedDrtn,TK_NotStart,HHI.1149,Weld Inside Vertical Seam,,0,0,10,0,160,160,10,42.666666,0,42.666666,,,,2014-06-08 07:00,2014-06-08 17:00,,2014-06-08 07:00,2014-06-08 17:00,2014-06-08 07:00,2014-06-08 17:00,2014-06-08 07:00,2014-06-08 17:00,2014-06-08 07:00,2014-06-08 17:00,,PT_Normal,,,,,DDYkBB17Ti6/R899rhGHdg,ZL731rNOVkKdFO21k8xHBw,,,Y,0,0,,,2014-02-17 15:27,2014-03-01 14:49,admin,admin,
1445,128243,6764,35393,6640,0,N,N,N,CP_Drtn,TT_Task,DT_FixedDrtn,TK_NotStart,HHI.1150,"""""Weld Outer Horizontal Seam between Shell Course # 5 & 6""""",,0,0,10,0,405.333336,405.333336,10,85.333333,0,85.333333,,,,2014-06-09 07:00,2014-06-09 17:00,,2014-06-09 07:00,2014-06-09 17:00,2014-06-09 07:00,2014-06-09 17:00,2014-06-09 07:00,2014-06-09 17:00,2014-06-09 07:00,2014-06-09 17:00,,PT_Normal,,,,,2XQ08UeJSh+1a0p4XXcyrQ,T9n5Mwd11U2npvHurBZbSg,,,Y,0,0,,,2014-02-17 15:27,2014-03-01 14:49,admin,admin,
1446,128244,6764,35393,6640,0,N,N,N,CP_Drtn,TT_Task,DT_FixedDrtn,TK_NotStart,HHI.1151,"""""Backgouge & NDT Inside Horizontal Seam between Shell Course# 5 & 6""""",,0,0,10,0,108.444444,108.444444,10,33.066667,0,33.066667,,,,2014-06-10 07:00,2014-06-10 17:00,,2014-06-10 07:00,2014-06-10 17:00,2014-06-10 07:00,2014-06-10 17:00,2014-06-10 07:00,2014-06-10 17:00,2014-06-10 07:00,2014-06-10 17:00,,PT_Normal,,,,,7bo1MDe+RkWtkMl3lWG0cg,AtUcbUyXrkSvatzsyAyD1A,,,Y,0,0,,,2014-02-17 15:27,2014-03-01 14:49,admin,admin,
1447,128245,6764,35393,6640,0,N,N,N,CP_Drtn,TT_Task,DT_FixedDrtn,TK_NotStart,HHI.1152,"Weld Inner Horizontal Seam between Shell Course # 5 & 6""""/Fit,Weld Nozzle on Shell",,0,0,10,0,202.666668,202.666668,10,85.333333,0,85.333333,,,,2014-06-11 07:00,2014-06-11 17:00,,2014-06-11 07:00,2014-06-11 17:00,2014-06-11 07:00,2014-06-11 17:00,2014-06-11 07:00,2014-06-11 17:00,2014-06-11 07:00,2014-06-11 17:00,,PT_Normal,,,,,QXY5IMdhSA6pHpJgGzApmA,JqmRcxdYXESRrN9YPKXLQg,,,Y,0,0,,,2014-02-17 15:27,2014-03-01 14:49,admin,admin,
1448,128246,6764,35393,6640,0,N,N,N,CP_Drtn,TT_Task,DT_FixedDrtn,TK_NotStart,HHI.1153,"Quailty Check(Visual Inspection,PT,Air Leak Test for Shell Nozzle))",,0,0,60,0,27.111111,27.111111,60,33.066667,0,33.066667,,,,2014-06-05 07:00,2014-06-11 17:00,,2014-06-05 07:00,2014-06-11 17:00,2014-06-05 07:00,2014-06-11 17:00,2014-06-05 07:00,2014-06-11 17:00,2014-06-05 07:00,2014-06-11 17:00,,PT_Normal,,,,,MzTJDdfwTO2zXZ1rWWX3iQ,mxOUvJ8kNECcPMKH2oFd/A,,,Y,0,0,,,2014-02-17 15:27,2014-03-01 14:49,admin,admin,
1449,128247,6764,35394,6640,0,N,N,N,CP_Drtn,TT_Task,DT_FixedDrtn,TK_NotStart,HHI.1135,Erect & Tack Shell Course # 6 & Internal Stagging Brackets,,0,0,10,0,400,400,10,48,0,48,,,,2014-05-25 07:00,2014-05-25 17:00,,2014-05-25 07:00,2014-05-25 17:00,2014-05-25 07:00,2014-05-25 17:00,2014-05-25 07:00,2014-05-25 17:00,2014-05-25 07:00,2014-05-25 17:00,,PT_Normal,,,,,jjVkxJiZTq+zZHU7I4y6Dg,Jycex8EkpEa+2DFfqB9NHQ,,,Y,0,0,,,2014-02-17 15:27,2014-03-01 14:49,admin,admin,
1450,128248,6764,35394,6640,0,N,N,N,CP_Drtn,TT_Task,DT_FixedDrtn,TK_NotStart,HHI.1136,Weld Outer Vertical Seam /Install the Stairways support on Shell,,0,0,10,0,181.333332,181.333332,10,42.666666,0,42.666666,,,,2014-05-26 07:00,2014-05-26 17:00,,2014-05-26 07:00,2014-05-26 17:00,2014-05-26 07:00,2014-05-26 17:00,2014-05-26 07:00,2014-05-26 17:00,2014-05-26 07:00,2014-05-26 17:00,,PT_Normal,,,,,Vb4ncZgYQ2uShX4+QVWkVw,YAAoRPBWpUCZ6d4q0ftFlA,,,Y,0,0,,,2014-02-17 15:27,2014-03-01 14:49,admin,admin,
1451,128249,6764,35394,6640,0,N,N,N,CP_Drtn,TT_Task,DT_FixedDrtn,TK_NotStart,HHI.1137,Backgouge & NDT Inside Vertical Seam,,0,0,10,0,101.333332,101.333332,10,42.666666,0,42.666666,,,,2014-05-27 07:00,2014-05-27 17:00,,2014-05-27 07:00,2014-05-27 17:00,2014-05-27 07:00,2014-05-27 17:00,2014-05-27 07:00,2014-05-27 17:00,2014-05-27 07:00,2014-05-27 17:00,,PT_Normal,,,,,xHEX/1R4QkWbydp4T2QPxg,E7QDphM6UkGAEz1uR1g4UA,,,Y,0,0,,,2014-02-17 15:27,2014-03-01 14:49,admin,admin,
1452,128250,6764,35394,6640,0,N,N,N,CP_Drtn,TT_Task,DT_FixedDrtn,TK_NotStart,HHI.1138,Weld Inside Vertical Seam,,0,0,10,0,191.999998,191.999998,10,42.666666,0,42.666666,,,,2014-05-28 07:00,2014-05-28 17:00,,2014-05-28 07:00,2014-05-28 17:00,2014-05-28 07:00,2014-05-28 17:00,2014-05-28 07:00,2014-05-28 17:00,2014-05-28 07:00,2014-05-28 17:00,,PT_Normal,,,,,AfzbcfUcRyqPc6dz8/oGrA,DumbRP5mh0aaZMtWsA89kA,,,Y,0,0,,,2014-02-17 15:27,2014-03-01 14:49,admin,admin,
1453,128251,6764,35394,6640,0,N,N,N,CP_Drtn,TT_Task,DT_FixedDrtn,TK_NotStart,HHI.1139,"""""Weld Outer Horizontal Seam between Shell Course # 5 & 6""""",,0,0,10,0,405.333336,405.333336,10,85.333333,0,85.333333,,,,2014-05-29 07:00,2014-05-29 17:00,,2014-05-29 07:00,2014-05-29 17:00,2014-05-29 07:00,2014-05-29 17:00,2014-05-29 07:00,2014-05-29 17:00,2014-05-29 07:00,2014-05-29 17:00,,PT_Normal,,,,,IFjE0sriShWWyEEFa1uZlA,dM7b5fkIfkGbv6zypDNCeg,,,Y,0,0,,,2014-02-17 15:27,2014-03-01 14:49,admin,admin,
1454,128252,6764,35394,6640,0,N,N,N,CP_Drtn,TT_Task,DT_FixedDrtn,TK_NotStart,HHI.1140,"""""Backgouge & NDT Inside Horizontal Seam between Shell Course# 5 & 6""""",,0,0,10,0,108.444444,108.444444,10,33.066667,0,33.066667,,,,2014-05-31 07:00,2014-05-31 17:00,,2014-05-31 07:00,2014-05-31 17:00,2014-05-31 07:00,2014-05-31 17:00,2014-05-31 07:00,2014-05-31 17:00,2014-05-31 07:00,2014-05-31 17:00,,PT_Normal,,,,,aminQ4FWS8GRlZ00UjJLqQ,cKRrtDSwFE67RjGDgm7KPw,,,Y,0,0,,,2014-02-17 15:27,2014-03-01 14:49,admin,admin,
1455,128253,6764,35394,6640,0,N,N,N,CP_Drtn,TT_Task,DT_FixedDrtn,TK_NotStart,HHI.1141,"Weld Inner Horizontal Seam between Shell Course # 5 & 6""""/Fit,Weld Nozzle on Shell",,0,0,10,0,202.666668,202.666668,10,85.333333,0,85.333333,,,,2014-06-01 07:00,2014-06-01 17:00,,2014-06-01 07:00,2014-06-01 17:00,2014-06-01 07:00,2014-06-01 17:00,2014-06-01 07:00,2014-06-01 17:00,2014-06-01 07:00,2014-06-01 17:00,,PT_Normal,,,,,3jNbOzrIQ72q7rFU0DCNoA,MRz+cPrhdkGq+OmtcxAh+w,,,Y,0,0,,,2014-02-17 15:27,2014-03-01 14:49,admin,admin,
1456,128254,6764,35394,6640,0,N,N,N,CP_Drtn,TT_Task,DT_FixedDrtn,TK_NotStart,HHI.1142,"Quailty Check(Visual Inspection,PT,Air Leak Test for Shell Nozzle))",,0,0,60,0,34.222222,34.222222,60,33.066667,0,33.066667,,,,2014-05-26 07:00,2014-06-01 17:00,,2014-05-26 07:00,2014-06-01 17:00,2014-05-26 07:00,2014-06-01 17:00,2014-05-26 07:00,2014-06-01 17:00,2014-05-26 07:00,2014-06-01 17:00,,PT_Normal,,,,,EhxBEvQEQRqeK4A/1Zl8BQ,Sw9o81O+q0meLlDSPogAqA,,,Y,0,0,,,2014-02-17 15:27,2014-03-01 14:49,admin,admin,
1457,128255,6764,35395,6640,0,N,N,N,CP_Drtn,TT_Task,DT_FixedDrtn,TK_NotStart,HHI.1143,Erect & Tack Wind Girder,,0,0,10,0,276.888892,276.888892,10,11.377778,0,11.377778,,,,2014-06-02 07:00,2014-06-02 17:00,,2014-06-02 07:00,2014-06-02 17:00,2014-06-02 07:00,2014-06-02 17:00,2014-06-02 07:00,2014-06-02 17:00,2014-06-02 07:00,2014-06-02 17:00,,PT_Normal,,,,,F2D9ZB4NTNeVIvXmQrc/Mg,KAzitPMl7UWCseBPgg4iLQ,,,Y,0,0,,,2014-02-17 15:27,2014-03-01 14:49,admin,admin,
1458,128256,6764,35395,6640,0,N,N,N,CP_Drtn,TT_Task,DT_FixedDrtn,TK_NotStart,HHI.1144,Weld Wind Girder,,0,0,10,0,608.000004,608.000004,10,85.333333,0,85.333333,,,,2014-06-03 07:00,2014-06-03 17:00,,2014-06-03 07:00,2014-06-03 17:00,2014-06-03 07:00,2014-06-03 17:00,2014-06-03 07:00,2014-06-03 17:00,2014-06-03 07:00,2014-06-03 17:00,,PT_Normal,,,,,cUhpgZ+ORhWxvv3ryy0AvA,wlpmOCPRD0KbK63oGvMfHw,,,Y,0,0,,,2014-02-17 15:27,2014-03-01 14:49,admin,admin,
1459,128257,6764,35395,6640,0,N,N,N,CP_Drtn,TT_Task,DT_FixedDrtn,TK_NotStart,HHI.1145,Quailty Check(Visual Inspection & PT),,0,0,20,0,0,0,20,0,0,0,,,,2014-06-02 07:00,2014-06-03 17:00,,2014-06-02 07:00,2014-06-03 17:00,2014-06-02 07:00,2014-06-03 17:00,2014-06-02 07:00,2014-06-03 17:00,2014-06-02 07:00,2014-06-03 17:00,,PT_Normal,,,,,8cMUlDRaRomt9Vc7jxcEWg,xmFaSTAt5EqEkCUP6IvT5A,,,Y,0,0,,,2014-02-17 15:27,2014-03-01 14:49,admin,admin,
1460,128258,6764,35396,6640,0,N,N,N,CP_Drtn,TT_Task,DT_FixedDrtn,TK_NotStart,HHI.1154,Erect & Tack Wind Girder,,0,0,10,0,262.666669,262.666669,10,11.377778,0,11.377778,,,,2014-06-12 07:00,2014-06-12 17:00,,2014-06-12 07:00,2014-06-12 17:00,2014-06-12 07:00,2014-06-12 17:00,2014-06-12 07:00,2014-06-12 17:00,2014-06-12 07:00,2014-06-12 17:00,,PT_Normal,,,,,Zr4jsHlwTu2mmyjp7C4CqQ,AgG5utLty0SlNNs+luzC7w,,,Y,0,0,,,2014-02-17 15:27,2014-03-01 14:49,admin,admin,
1461,128259,6764,35396,6640,0,N,N,N,CP_Drtn,TT_Task,DT_FixedDrtn,TK_NotStart,HHI.1155,Weld Wind Girder,,0,0,10,0,576.000003,576.000003,10,85.333334,0,85.333334,,,,2014-06-14 07:00,2014-06-14 17:00,,2014-06-14 07:00,2014-06-14 17:00,2014-06-14 07:00,2014-06-14 17:00,2014-06-14 07:00,2014-06-14 17:00,2014-06-14 07:00,2014-06-14 17:00,,PT_Normal,,,,,7lCqCg/gQ+OosRM23xr0Cw,XGpo5Pbsu0ypnBNL1G9Pvg,,,Y,0,0,,,2014-02-17 15:27,2014-03-01 14:49,admin,admin,
1462,128260,6764,35396,6640,0,N,N,N,CP_Drtn,TT_Task,DT_FixedDrtn,TK_NotStart,HHI.1156,Quailty Check(Visual Inspection & PT),,0,0,20,0,0,0,20,0,0,0,,,,2014-06-12 07:00,2014-06-14 17:00,,2014-06-12 07:00,2014-06-14 17:00,2014-06-12 07:00,2014-06-14 17:00,2014-06-12 07:00,2014-06-14 17:00,2014-06-12 07:00,2014-06-14 17:00,,PT_Normal,,,,,4tOINXIzTH+nk0m+m1XP9A,Vf3VJRlbf0OtNKG6YQudGw,,,Y,0,0,,,2014-02-17 15:27,2014-03-01 14:49,admin,admin,
1463,128261,6764,35397,6640,0,N,N,N,CP_Drtn,TT_Task,DT_FixedDrtn,TK_NotStart,HHI.1157,Perform RT for Tank#1 & #2,,0,0,10,0,0,0,10,0,0,0,,,,2014-06-15 07:00,2014-06-15 17:00,,2014-06-15 07:00,2014-06-15 17:00,2014-06-15 07:00,2014-06-15 17:00,2014-06-15 07:00,2014-06-15 17:00,2014-06-15 07:00,2014-06-15 17:00,,PT_Normal,,,,,Sn4TowiQShescITn22jLpg,lIoEQjjNck+yoYvMymY4NQ,,,Y,0,0,,,2014-02-17 15:27,2014-03-01 14:49,admin,admin,
1464,128262,6764,35399,6640,0,N,N,N,CP_Drtn,TT_Task,DT_FixedDrtn,TK_NotStart,HHI.1082,Erect & Tack Shell Course # 4 & Install Stagging Brackets,,0,0,10,0,480,480,10,48,0,48,,,,2014-04-21 07:00,2014-04-21 17:00,,2014-04-21 07:00,2014-04-21 17:00,2014-04-21 07:00,2014-04-21 17:00,2014-04-21 07:00,2014-04-21 17:00,2014-04-21 07:00,2014-04-21 17:00,,PT_Normal,,,,,UEK/VvUDTgSl4PgMcIKSKg,vYNQ4nt7Rjq0KyUH4ACYUQ,,,Y,0,0,,,2014-02-17 15:27,2014-03-01 14:49,admin,admin,
1465,128263,6764,35399,6640,0,N,N,N,CP_Drtn,TT_Task,DT_FixedDrtn,TK_NotStart,HHI.1083,Weld Outer Vertical Seam/Install the Stairways support on Shell,,0,0,10,0,160,160,10,85.333334,0,85.333334,,,,2014-04-22 07:00,2014-04-22 17:00,,2014-04-22 07:00,2014-04-22 17:00,2014-04-22 07:00,2014-04-22 17:00,2014-04-22 07:00,2014-04-22 17:00,2014-04-22 07:00,2014-04-22 17:00,,PT_Normal,,,,,7NOMJzL+QSmU0HisqNzZkQ,zM0ry8s4TcSpKrBwurgq8Q,,,Y,0,0,,,2014-02-17 15:27,2014-03-01 14:49,admin,admin,
1466,128264,6764,35399,6640,0,N,N,N,CP_Drtn,TT_Task,DT_FixedDrtn,TK_NotStart,HHI.1084,Backgouge & NDT Inside Vertical Seam,,0,0,10,0,80,80,10,33.066667,0,33.066667,,,,2014-04-23 07:00,2014-04-23 17:00,,2014-04-23 07:00,2014-04-23 17:00,2014-04-23 07:00,2014-04-23 17:00,2014-04-23 07:00,2014-04-23 17:00,2014-04-23 07:00,2014-04-23 17:00,,PT_Normal,,,,,JrArYzmwRuSVl/Bd9HVGOg,8XZPDLNHTB6oPxonUstkxQ,,,Y,0,0,,,2014-02-17 15:27,2014-03-01 14:49,admin,admin,
1467,128265,6764,35399,6640,0,N,N,N,CP_Drtn,TT_Task,DT_FixedDrtn,TK_NotStart,HHI.1085,Weld Inside Vertical Seam,,0,0,10,0,202.666668,202.666668,10,85.333333,0,85.333333,,,,2014-04-24 07:00,2014-04-24 17:00,,2014-04-24 07:00,2014-04-24 17:00,2014-04-24 07:00,2014-04-24 17:00,2014-04-24 07:00,2014-04-24 17:00,2014-04-24 07:00,2014-04-24 17:00,,PT_Normal,,,,,3gWZoCe7SHiLbOyyAW8vaw,/qnSxV5TRI6YTuXiWydigA,,,Y,0,0,,,2014-02-17 15:27,2014-03-01 14:49,admin,admin,
1468,128266,6764,35399,6640,0,N,N,N,CP_Drtn,TT_Task,DT_FixedDrtn,TK_NotStart,HHI.1086,"Weld Outer Horizontal Seam between Shell Course # 3 & 4""""",,0,0,20,0,388.266664,388.266664,20,72.96,0,72.96,,,,2014-04-26 07:00,2014-04-27 17:00,,2014-04-26 07:00,2014-04-27 17:00,2014-04-26 07:00,2014-04-27 17:00,2014-04-26 07:00,2014-04-27 17:00,2014-04-26 07:00,2014-04-27 17:00,,PT_Normal,,,,,mNxv9rgMQ7u1LGYolxU1dg,tNRyVYCbQKeK3AhtrYm9Yw,,,Y,0,0,,,2014-02-17 15:27,2014-03-01 14:49,admin,admin,
1469,128267,6764,35399,6640,0,N,N,N,CP_Drtn,TT_Task,DT_FixedDrtn,TK_NotStart,HHI.1087,"Backgouge & NDT Inside Horizontal Seam between Shell Course# 3 & 4""""",,0,0,10,0,101.333333,101.333333,10,33.066667,0,33.066667,,,,2014-04-28 07:00,2014-04-28 17:00,,2014-04-28 07:00,2014-04-28 17:00,2014-04-28 07:00,2014-04-28 17:00,2014-04-28 07:00,2014-04-28 17:00,2014-04-28 07:00,2014-04-28 17:00,,PT_Normal,,,,,nWQfh41sTt6k8VDTKE8vLw,r8PHxJ42QhG2mfoRI8tayg,,,Y,0,0,,,2014-02-17 15:27,2014-03-01 14:49,admin,admin,
1470,128268,6764,35399,6640,0,N,N,N,CP_Drtn,TT_Task,DT_FixedDrtn,TK_NotStart,HHI.1088,"Weld Inner Horizontal Seam between Shell Course # 3 & 4""""/Fit,Weld Nozzle on Shell",,0,0,10,0,388.266664,388.266664,10,72.96,0,72.96,,,,2014-04-29 07:00,2014-04-29 17:00,,2014-04-29 07:00,2014-04-29 17:00,2014-04-29 07:00,2014-04-29 17:00,2014-04-29 07:00,2014-04-29 17:00,2014-04-29 07:00,2014-04-29 17:00,,PT_Normal,,,,,7KQu7SUtQ8ySsgobf7cqxA,p1t3yFSARvOHHXiwUSkFgA,,,Y,0,0,,,2014-02-17 15:27,2014-03-01 14:49,admin,admin,
1471,128269,6764,35399,6640,0,N,N,N,CP_Drtn,TT_Task,DT_FixedDrtn,TK_NotStart,HHI.1089,"Quailty Check(Visual Inspection,PT,Air Leak Test for Shell Nozzle)",,0,0,80,0,34.222222,34.222222,80,33.066667,0,33.066667,,,,2014-04-21 07:00,2014-04-29 17:00,,2014-04-21 07:00,2014-04-29 17:00,2014-04-21 07:00,2014-04-29 17:00,2014-04-21 07:00,2014-04-29 17:00,2014-04-21 07:00,2014-04-29 17:00,,PT_Normal,,,,,bpBP/87+QF+4rf9WUESDoA,MdcOImQ2Qa63hbEXRuGvTw,,,Y,0,0,,,2014-02-17 15:27,2014-03-01 14:49,admin,admin,
1472,128270,6764,35400,6640,0,N,N,N,CP_Drtn,TT_Task,DT_FixedDrtn,TK_NotStart,HHI.1090,Erect & Tack Shell Course # 4 & Install Stagging Brackets,,0,0,10,0,560,560,10,48,0,48,,,,2014-04-23 07:00,2014-04-23 17:00,,2014-04-23 07:00,2014-04-23 17:00,2014-04-23 07:00,2014-04-23 17:00,2014-04-23 07:00,2014-04-23 17:00,2014-04-23 07:00,2014-04-23 17:00,,PT_Normal,,,,,2GR+WJ54R7SGLosyE+DyAg,bc7Y6cE6QB+g+afXYFFsjw,,,Y,0,0,,,2014-02-17 15:27,2014-03-01 14:49,admin,admin,
1473,128271,6764,35400,6640,0,N,N,N,CP_Drtn,TT_Task,DT_FixedDrtn,TK_NotStart,HHI.1091,Weld Outer Vertical Seam/Install the Stairways support on Shell,,0,0,10,0,192.000001,192.000001,10,85.333334,0,85.333334,,,,2014-04-24 07:00,2014-04-24 17:00,,2014-04-24 07:00,2014-04-24 17:00,2014-04-24 07:00,2014-04-24 17:00,2014-04-24 07:00,2014-04-24 17:00,2014-04-24 07:00,2014-04-24 17:00,,PT_Normal,,,,,KHfm8TsARiSldCst3Cl8Xg,Gjh1garISTWPsmBTNzGvDQ,,,Y,0,0,,,2014-02-17 15:27,2014-03-01 14:49,admin,admin,
1474,128272,6764,35400,6640,0,N,N,N,CP_Drtn,TT_Task,DT_FixedDrtn,TK_NotStart,HHI.1092,Backgouge & NDT Inside Vertical Seam,,0,0,10,0,101.333333,101.333333,10,33.066667,0,33.066667,,,,2014-04-26 07:00,2014-04-26 17:00,,2014-04-26 07:00,2014-04-26 17:00,2014-04-26 07:00,2014-04-26 17:00,2014-04-26 07:00,2014-04-26 17:00,2014-04-26 07:00,2014-04-26 17:00,,PT_Normal,,,,,ejNsZ3CVS/etkXrUzS7v8Q,BNHOB1GTR4KpOEBPPqDY1A,,,Y,0,0,,,2014-02-17 15:27,2014-03-01 14:49,admin,admin,
1475,128273,6764,35400,6640,0,N,N,N,CP_Drtn,TT_Task,DT_FixedDrtn,TK_NotStart,HHI.1093,Weld Inside Vertical Seam,,0,0,10,0,202.666668,202.666668,10,85.333333,0,85.333333,,,,2014-04-27 07:00,2014-04-27 17:00,,2014-04-27 07:00,2014-04-27 17:00,2014-04-27 07:00,2014-04-27 17:00,2014-04-27 07:00,2014-04-27 17:00,2014-04-27 07:00,2014-04-27 17:00,,PT_Normal,,,,,n5DBLP0fRu+2evmQ+vVk7A,5JxXiDGsQa6yk8qLwKU4nw,,,Y,0,0,,,2014-02-17 15:27,2014-03-01 14:49,admin,admin,
1476,128274,6764,35400,6640,0,N,N,N,CP_Drtn,TT_Task,DT_FixedDrtn,TK_NotStart,HHI.1094,"Weld Outer Horizontal Seam between Shell Course # 3 & 4""""",,0,0,20,0,405.333332,405.333332,20,128,0,128,,,,2014-04-28 07:00,2014-04-29 17:00,,2014-04-28 07:00,2014-04-29 17:00,2014-04-28 07:00,2014-04-29 17:00,2014-04-28 07:00,2014-04-29 17:00,2014-04-28 07:00,2014-04-29 17:00,,PT_Normal,,,,,VoZqCZkJSzWEnFlkd+WbBg,BCDNliZHQF6A7+iVQXkgWg,,,Y,0,0,,,2014-02-17 15:27,2014-03-01 14:49,admin,admin,
1477,128275,6764,35400,6640,0,N,N,N,CP_Drtn,TT_Task,DT_FixedDrtn,TK_NotStart,HHI.1095,"Backgouge & NDT Inside Horizontal Seam between Shell Course# 3 & 4""""",,0,0,10,0,94.222222,94.222222,10,33.066667,0,33.066667,,,,2014-04-30 07:00,2014-04-30 17:00,,2014-04-30 07:00,2014-04-30 17:00,2014-04-30 07:00,2014-04-30 17:00,2014-04-30 07:00,2014-04-30 17:00,2014-04-30 07:00,2014-04-30 17:00,,PT_Normal,,,,,rpU4YhOEQReyjwouvqw4+Q,S8FE3RwDSFSDbXL7V2JXwg,,,Y,0,0,,,2014-02-17 15:27,2014-03-01 14:49,admin,admin,
1478,128276,6764,35400,6640,0,N,N,N,CP_Drtn,TT_Task,DT_FixedDrtn,TK_NotStart,HHI.1096,"Weld Inner Horizontal Seam between Shell Course # 3 & 4""""/Fit,Weld Nozzle on Shell",,0,0,10,0,405.333332,405.333332,10,128,0,128,,,,2014-05-01 07:00,2014-05-01 17:00,,2014-05-01 07:00,2014-05-01 17:00,2014-05-01 07:00,2014-05-01 17:00,2014-05-01 07:00,2014-05-01 17:00,2014-05-01 07:00,2014-05-01 17:00,,PT_Normal,,,,,tOIhKy4wR7SmXPod1UwXTg,jTDik1RCQW2qvwxG4+hFLg,,,Y,0,0,,,2014-02-17 15:27,2014-03-01 14:49,admin,admin,
1479,128277,6764,35400,6640,0,N,N,N,CP_Drtn,TT_Task,DT_FixedDrtn,TK_NotStart,HHI.1097,"Quailty Check(Visual Inspection,PT,Air Leak Test for Shell Nozzle))",,0,0,80,0,48.444444,48.444444,80,33.066667,0,33.066667,,,,2014-04-23 07:00,2014-05-01 17:00,,2014-04-23 07:00,2014-05-01 17:00,2014-04-23 07:00,2014-05-01 17:00,2014-04-23 07:00,2014-05-01 17:00,2014-04-23 07:00,2014-05-01 17:00,,PT_Normal,,,,,ySjrZ1WdTgW8+346Fberzg,vxiwwbxFSD6COwBXvbL9ug,,,Y,0,0,,,2014-02-17 15:27,2014-03-01 14:49,admin,admin,
1480,128278,6764,35401,6640,0,N,N,N,CP_Drtn,TT_Task,DT_FixedDrtn,TK_NotStart,HHI.1098,Perform RT for Tank#1 & #2,,0,0,10,0,0,0,10,0,0,0,,,,2014-05-03 07:00,2014-05-03 17:00,,2014-05-03 07:00,2014-05-03 17:00,2014-05-03 07:00,2014-05-03 17:00,2014-05-03 07:00,2014-05-03 17:00,2014-05-03 07:00,2014-05-03 17:00,,PT_Normal,,,,,bvuTC7dSQaeHUh34KUOc9A,/6cai9VLTE2sY94MF15f8w,,,Y,0,0,,,2014-02-17 15:27,2014-03-01 14:49,admin,admin,
1481,128279,6764,35403,6640,0,N,N,N,CP_Drtn,TT_Task,DT_FixedDrtn,TK_NotStart,HHI.1117,Erect & Tack Columns,,10,10,20,0,1680,1680,20,48,0,48,,,,2014-05-14 07:00,2014-05-15 17:00,,2014-05-13 07:00,2014-05-14 17:00,2014-05-13 07:00,2014-05-14 17:00,2014-05-13 07:00,2014-05-14 17:00,2014-05-14 07:00,2014-05-15 17:00,,PT_Normal,,,,,c+IOXf67TPunsVTtaTYcyA,V5K6TGHaTUGcH/Nc5PzjGg,,,N,0,0,,,2014-02-17 15:27,2014-03-01 14:49,admin,admin,
1482,128280,6764,35404,6640,0,N,N,N,CP_Drtn,TT_Task,DT_FixedDrtn,TK_NotStart,HHI.1116,Erect & Tack Columns,,0,0,20,0,1680,1680,20,48,0,48,,,,2014-05-11 07:00,2014-05-12 17:00,,2014-05-11 07:00,2014-05-12 17:00,2014-05-11 07:00,2014-05-12 17:00,2014-05-11 07:00,2014-05-12 17:00,2014-05-11 07:00,2014-05-12 17:00,,PT_Normal,,,,,9e1t7BLITDyk45iyYDae+g,bH5O94ZkSU6A3mxzxhlpew,,,Y,0,0,,,2014-02-17 15:27,2014-03-01 14:49,admin,admin,
1483,128281,6764,35406,6640,0,N,N,N,CP_Drtn,TT_Task,DT_FixedDrtn,TK_NotStart,HHI.1004,"Install Sealent,Erect & Tack of Annular Plates",,0,0,10,0,80,80,10,8,0,8,,,,2014-02-18 07:00,2014-02-18 17:00,,2014-02-18 07:00,2014-02-18 17:00,2014-02-18 07:00,2014-02-18 17:00,2014-02-18 07:00,2014-02-18 17:00,2014-02-18 07:00,2014-02-18 17:00,,PT_Normal,,,,,sxbI6H2nQtyCW0QyPgDHCg,097QdWX0SSCLEWFVz2DdGA,,,Y,0,0,,,2014-02-17 15:27,2014-03-01 14:49,admin,admin,
1484,128282,6764,35406,6640,0,N,N,N,CP_Drtn,TT_Task,DT_FixedDrtn,TK_NotStart,HHI.1005,Welding of Annular Plates,,0,0,10,0,180,180,10,40,0,40,,,,2014-02-19 07:00,2014-02-19 17:00,,2014-02-19 07:00,2014-02-19 17:00,2014-02-19 07:00,2014-02-19 17:00,2014-02-19 07:00,2014-02-19 17:00,2014-02-19 07:00,2014-02-19 17:00,,PT_Normal,,,,,wVsXGn4hQp+uOz34+nHj6g,oHh7lCJTS+iUEFSmdP+I4Q,,,Y,0,0,,,2014-02-17 15:27,2014-03-01 14:49,admin,admin,
1485,128283,6764,35406,6640,0,N,N,N,CP_Drtn,TT_Task,DT_FixedDrtn,TK_NotStart,HHI.1006,"Quailty Check (Visual Inspection,PT & Vaccum Box Test)",,0,0,20,0,40,40,20,40,0,40,,,,2014-02-18 07:00,2014-02-19 17:00,,2014-02-18 07:00,2014-02-19 17:00,2014-02-18 07:00,2014-02-19 17:00,2014-02-18 07:00,2014-02-19 17:00,2014-02-18 07:00,2014-02-19 17:00,,PT_Normal,,,,,1IdakwKgTKa8CI/09z+L+A,Cj0h9st1Que0naEhGC31Bg,,,Y,0,0,,,2014-02-17 15:27,2014-03-01 14:49,admin,admin,
1486,128284,6764,35407,6640,0,N,N,N,CP_Drtn,TT_Task,DT_FixedDrtn,TK_NotStart,HHI.1007,Prepare & Lay Down Bottom Plates,,0,0,20,0,347.999998,347.999998,20,25.6,0,25.6,,,,2014-02-20 07:00,2014-02-22 17:00,,2014-02-20 07:00,2014-02-22 17:00,2014-02-20 07:00,2014-02-22 17:00,2014-02-20 07:00,2014-02-22 17:00,2014-02-20 07:00,2014-02-22 17:00,,PT_Normal,,,,,oXodotFTQ26kGGYIkEkkfw,cSuqDDb+QJmAnEmAz7DsJA,,,Y,0,0,,,2014-02-17 15:27,2014-03-01 14:49,admin,admin,
1487,128285,6764,35407,6640,0,N,N,N,CP_Drtn,TT_Task,DT_FixedDrtn,TK_NotStart,HHI.1009,Quailty Check (Visual Inspection& Vaccum Box Test),,0,0,120,0,21.333334,21.333334,120,42.666666,0,42.666666,,,,2014-02-20 07:00,2014-03-05 17:00,,2014-02-20 07:00,2014-03-05 17:00,2014-02-20 07:00,2014-03-05 17:00,2014-02-20 07:00,2014-03-05 17:00,2014-02-20 07:00,2014-03-05 17:00,,PT_Normal,,,,,+PKRHScyTFy/RfrxRJxj5Q,XZOJUaRwRAK6ogOg9ogpWA,,,Y,0,0,,,2014-02-17 15:27,2014-03-01 14:49,admin,admin,
1488,128286,6764,35407,6640,0,N,N,N,CP_Drtn,TT_Task,DT_FixedDrtn,TK_NotStart,HHI.1012,"Erect,Fitup of Sump",,30,30,10,0,51.999998,51.999998,10,42.666666,0,42.666666,,,,2014-03-04 07:00,2014-03-04 17:00,,2014-03-01 07:00,2014-03-01 17:00,2014-03-01 07:00,2014-03-01 17:00,2014-03-01 07:00,2014-03-01 17:00,2014-03-04 07:00,2014-03-04 17:00,,PT_Normal,,,,,HqRwYkH3Tx+GHQMPZH/r0g,azLvu2U/T7yLYVzFoh2CDg,,,N,0,0,,,2014-02-17 15:27,2014-03-01 14:49,admin,admin,
1489,128287,6764,35407,6640,0,N,N,N,CP_Drtn,TT_Task,DT_FixedDrtn,TK_NotStart,HHI.1014,Weld Sump,,0,0,10,0,17.066666,17.066666,10,42.666666,0,42.666666,,,,2014-03-05 07:00,2014-03-05 17:00,,2014-03-05 07:00,2014-03-05 17:00,2014-03-05 07:00,2014-03-05 17:00,2014-03-05 07:00,2014-03-05 17:00,2014-03-05 07:00,2014-03-05 17:00,,PT_Normal,,,,,VZcbgFCBRLiZUji94K3E0A,SqxN3XVPRMGrmG0HRhHfKQ,,,Y,0,0,,,2014-02-17 15:27,2014-03-01 14:49,admin,admin,
1490,128288,6764,35407,6640,0,N,N,N,CP_Drtn,TT_Task,DT_FixedDrtn,TK_NotStart,HHI.1008,Fit/Tack Bottom Plates-Short Seams,,0,0,20,0,0,0,20,0,0,0,,,,2014-02-24 07:00,2014-02-25 17:00,,2014-02-24 07:00,2014-02-25 17:00,2014-02-24 07:00,2014-02-25 17:00,2014-02-24 07:00,2014-02-25 17:00,2014-02-24 07:00,2014-02-25 17:00,,PT_Normal,,,,,L1/NPvmxRUC/Ux8HfVBxwQ,uhkdYaWUx0+umBsFw9lChQ,,,Y,0,0,,,2014-02-17 15:27,2014-03-01 14:49,admin,admin,
1491,128289,6764,35407,6640,0,N,N,N,CP_Drtn,TT_Task,DT_FixedDrtn,TK_NotStart,HHI.1010,Weld Short Seams,,0,0,20,0,0,0,20,0,0,0,,,,2014-02-25 07:00,2014-02-26 17:00,,2014-02-25 07:00,2014-02-26 17:00,2014-02-25 07:00,2014-02-26 17:00,2014-02-25 07:00,2014-02-26 17:00,2014-02-25 07:00,2014-02-26 17:00,,PT_Normal,,,,,Va6VKdqwQQ+xaaSTzhd90g,+WnS43UkRUOt/DhBTcv3Hw,,,Y,0,0,,,2014-02-17 15:27,2014-03-01 14:49,admin,admin,
1492,128290,6764,35407,6640,0,N,N,N,CP_Drtn,TT_Task,DT_FixedDrtn,TK_NotStart,HHI.1011,Fit/Tack Bottom Plates-Long Seams,,0,0,20,0,0,0,20,0,0,0,,,,2014-02-27 07:00,2014-03-01 17:00,,2014-02-27 07:00,2014-03-01 17:00,2014-02-27 07:00,2014-03-01 17:00,2014-02-27 07:00,2014-03-01 17:00,2014-02-27 07:00,2014-03-01 17:00,,PT_Normal,,,,,zqW6b2sjS7yF3C53CPMMNQ,YK2VI0eP302gnVkOZh9TDA,,,Y,0,0,,,2014-02-17 15:27,2014-03-01 14:49,admin,admin,
1493,128291,6764,35407,6640,0,N,N,N,CP_Drtn,TT_Task,DT_FixedDrtn,TK_NotStart,HHI.1013,Weld Long Seams,,0,0,50,0,0,0,50,0,0,0,,,,2014-03-01 07:00,2014-03-05 17:00,,2014-03-01 07:00,2014-03-05 17:00,2014-03-01 07:00,2014-03-05 17:00,2014-03-01 07:00,2014-03-05 17:00,2014-03-01 07:00,2014-03-05 17:00,,PT_Normal,,,,,sUJNL9zcS1S8qVSu5K8n9A,AsgK1LnCDEKHVNCBxqz+EA,,,Y,0,0,,,2014-02-17 15:27,2014-03-01 14:49,admin,admin,
1494,128292,6764,35409,6640,0,N,N,N,CP_Drtn,TT_Task,DT_FixedDrtn,TK_NotStart,HHI.1115,Perform RT for Tank#1 & #2,,0,0,10,0,0,0,10,0,0,0,,,,2014-05-13 07:00,2014-05-13 17:00,,2014-05-13 07:00,2014-05-13 17:00,2014-05-13 07:00,2014-05-13 17:00,2014-05-13 07:00,2014-05-13 17:00,2014-05-13 07:00,2014-05-13 17:00,,PT_Normal,,,,,7M0IfFMiRn+lwdd4aLxalA,57QxJzEdjEy1pDYy8+dWuQ,,,Y,0,0,,,2014-02-17 15:27,2014-03-01 14:49,admin,admin,
1495,128293,6764,35410,6640,0,N,N,N,CP_Drtn,TT_Task,DT_FixedDrtn,TK_NotStart,HHI.1107,Erect & Tack Shell Course # 5 & Install Stagging Brackets,,0,0,10,0,440,440,10,48,0,48,,,,2014-05-05 07:00,2014-05-05 17:00,,2014-05-05 07:00,2014-05-05 17:00,2014-05-05 07:00,2014-05-05 17:00,2014-05-05 07:00,2014-05-05 17:00,2014-05-05 07:00,2014-05-05 17:00,,PT_Normal,,,,,FGEg8uHPR1WqZCZ44Vuz2Q,6q/BDSb3RNOgIVf4NN2WrA,,,Y,0,0,,,2014-02-17 15:27,2014-03-01 14:49,admin,admin,
1496,128294,6764,35410,6640,0,N,N,N,CP_Drtn,TT_Task,DT_FixedDrtn,TK_NotStart,HHI.1108,Weld Outer Vertical Seam/Install the Stairways support on Shell,,0,0,10,0,160,160,10,33.066667,0,33.066667,,,,2014-05-06 07:00,2014-05-06 17:00,,2014-05-06 07:00,2014-05-06 17:00,2014-05-06 07:00,2014-05-06 17:00,2014-05-06 07:00,2014-05-06 17:00,2014-05-06 07:00,2014-05-06 17:00,,PT_Normal,,,,,RM2kLJ2UTM29GCCYA5ltGQ,rCgPssAPSnGhPoHBW3hJiw,,,Y,0,0,,,2014-02-17 15:27,2014-03-01 14:49,admin,admin,
1497,128295,6764,35410,6640,0,N,N,N,CP_Drtn,TT_Task,DT_FixedDrtn,TK_NotStart,HHI.1109,Backgouge & NDT Inside Vertical Seam,,0,0,10,0,80,80,10,42.666666,0,42.666666,,,,2014-05-07 07:00,2014-05-07 17:00,,2014-05-07 07:00,2014-05-07 17:00,2014-05-07 07:00,2014-05-07 17:00,2014-05-07 07:00,2014-05-07 17:00,2014-05-07 07:00,2014-05-07 17:00,,PT_Normal,,,,,fzjTkBFzSD+TupZe0tvfkA,k1VmmGRURk+9Zdzru2ceCA,,,Y,0,0,,,2014-02-17 15:27,2014-03-01 14:49,admin,admin,
1498,128296,6764,35410,6640,0,N,N,N,CP_Drtn,TT_Task,DT_FixedDrtn,TK_NotStart,HHI.1110,Weld Inside Vertical Seam,,0,0,10,0,167.111111,167.111111,10,33.066667,0,33.066667,,,,2014-05-08 07:00,2014-05-08 17:00,,2014-05-08 07:00,2014-05-08 17:00,2014-05-08 07:00,2014-05-08 17:00,2014-05-08 07:00,2014-05-08 17:00,2014-05-08 07:00,2014-05-08 17:00,,PT_Normal,,,,,7MVXhdPCREuI4UTHQ04dyA,FmgYjGY7Rfqs9NoV40XANw,,,Y,0,0,,,2014-02-17 15:27,2014-03-01 14:49,admin,admin,
1499,128297,6764,35410,6640,0,N,N,N,CP_Drtn,TT_Task,DT_FixedDrtn,TK_NotStart,HHI.1111,"""""Weld Outer Horizontal Seam between Shell Course # 4 & 5""""",,0,0,10,0,341.333334,341.333334,10,85.333334,0,85.333334,,,,2014-05-10 07:00,2014-05-10 17:00,,2014-05-10 07:00,2014-05-10 17:00,2014-05-10 07:00,2014-05-10 17:00,2014-05-10 07:00,2014-05-10 17:00,2014-05-10 07:00,2014-05-10 17:00,,PT_Normal,,,,,aMhs/elDQ9WJsXP+qAlQjw,P7ZeSVVQTAO2LWUhoM0TqA,,,Y,0,0,,,2014-02-17 15:27,2014-03-01 14:49,admin,admin,
1500,128298,6764,35410,6640,0,N,N,N,CP_Drtn,TT_Task,DT_FixedDrtn,TK_NotStart,HHI.1112,"""""Backgouge & NDT Inside Horizontal Seam between Shell Course# 4 & 5""""",,0,0,10,0,108.444444,108.444444,10,33.066667,0,33.066667,,,,2014-05-11 07:00,2014-05-11 17:00,,2014-05-11 07:00,2014-05-11 17:00,2014-05-11 07:00,2014-05-11 17:00,2014-05-11 07:00,2014-05-11 17:00,2014-05-11 07:00,2014-05-11 17:00,,PT_Normal,,,,,TA5pVBxxSyWvdoaTs0QkDA,lvHZpmfBQ3uOVQUTZ7DSHQ,,,Y,0,0,,,2014-02-17 15:27,2014-03-01 14:49,admin,admin,
1501,128299,6764,35410,6640,0,N,N,N,CP_Drtn,TT_Task,DT_FixedDrtn,TK_NotStart,HHI.1113,"Weld Inner Horizontal Seam between Shell Course #4 & 5""""",,0,0,10,0,405.333336,405.333336,10,85.333333,0,85.333333,,,,2014-05-12 07:00,2014-05-12 17:00,,2014-05-12 07:00,2014-05-12 17:00,2014-05-12 07:00,2014-05-12 17:00,2014-05-12 07:00,2014-05-12 17:00,2014-05-12 07:00,2014-05-12 17:00,,PT_Normal,,,,,Sj+w8YMhQU6Ii6Ei/rO2Uw,xPOXDYHdQvOC00W7kDCTMg,,,Y,0,0,,,2014-02-17 15:27,2014-03-01 14:49,admin,admin,
1502,128300,6764,35410,6640,0,N,N,N,CP_Drtn,TT_Task,DT_FixedDrtn,TK_NotStart,HHI.1114,Quailty Check(Visual Inspection),,0,0,70,0,55.555555,55.555555,70,33.066667,0,33.066667,,,,2014-05-05 07:00,2014-05-12 17:00,,2014-05-05 07:00,2014-05-12 17:00,2014-05-05 07:00,2014-05-12 17:00,2014-05-05 07:00,2014-05-12 17:00,2014-05-05 07:00,2014-05-12 17:00,,PT_Normal,,,,,SahXc1aiRRSmxDIy+r5U4Q,UR/t2yvfTkCyuXQg//ZP2g,,,Y,0,0,,,2014-02-17 15:27,2014-03-01 14:49,admin,admin,
1503,128301,6764,35411,6640,0,N,N,N,CP_Drtn,TT_Task,DT_FixedDrtn,TK_NotStart,HHI.1099,Erect & Tack Shell Course # 5 & Install Stagging Brackets,,0,0,10,0,380,380,10,48,0,48,,,,2014-05-03 07:00,2014-05-03 17:00,,2014-05-03 07:00,2014-05-03 17:00,2014-05-03 07:00,2014-05-03 17:00,2014-05-03 07:00,2014-05-03 17:00,2014-05-03 07:00,2014-05-03 17:00,,PT_Normal,,,,,ydNiuEHSS+2ge8erL7EOZQ,AmSfcp/1R7W22HR0+8ewXg,,,Y,0,0,,,2014-02-17 15:27,2014-03-01 14:49,admin,admin,
1504,128302,6764,35411,6640,0,N,N,N,CP_Drtn,TT_Task,DT_FixedDrtn,TK_NotStart,HHI.1100,Weld Outer Vertical Seam/Install the Stairways support on Shell,,0,0,10,0,167.111111,167.111111,10,33.066667,0,33.066667,,,,2014-05-04 07:00,2014-05-04 17:00,,2014-05-04 07:00,2014-05-04 17:00,2014-05-04 07:00,2014-05-04 17:00,2014-05-04 07:00,2014-05-04 17:00,2014-05-04 07:00,2014-05-04 17:00,,PT_Normal,,,,,pqLXa9zZQ5KYU62CPv3rdQ,VyW7xQ1cQwaYAmEL0EzI/w,,,Y,0,0,,,2014-02-17 15:27,2014-03-01 14:49,admin,admin,
1505,128303,6764,35411,6640,0,N,N,N,CP_Drtn,TT_Task,DT_FixedDrtn,TK_NotStart,HHI.1101,Backgouge & NDT Inside Vertical Seam,,0,0,10,0,90.666666,90.666666,10,42.666666,0,42.666666,,,,2014-05-05 07:00,2014-05-05 17:00,,2014-05-05 07:00,2014-05-05 17:00,2014-05-05 07:00,2014-05-05 17:00,2014-05-05 07:00,2014-05-05 17:00,2014-05-05 07:00,2014-05-05 17:00,,PT_Normal,,,,,yWCmBNOeQMqQP8sjNoCKEA,SRCHG8RyTMCxgVaJ9TD7+g,,,Y,0,0,,,2014-02-17 15:27,2014-03-01 14:49,admin,admin,
1506,128304,6764,35411,6640,0,N,N,N,CP_Drtn,TT_Task,DT_FixedDrtn,TK_NotStart,HHI.1102,Weld Inside Vertical Seam,,0,0,10,0,160,160,10,33.066667,0,33.066667,,,,2014-05-06 07:00,2014-05-06 17:00,,2014-05-06 07:00,2014-05-06 17:00,2014-05-06 07:00,2014-05-06 17:00,2014-05-06 07:00,2014-05-06 17:00,2014-05-06 07:00,2014-05-06 17:00,,PT_Normal,,,,,sbTjgoPfRH+U8jhnaGON+w,XVsddY+1S1ekh/guXtMoFw,,,Y,0,0,,,2014-02-17 15:27,2014-03-01 14:49,admin,admin,
1507,128305,6764,35411,6640,0,N,N,N,CP_Drtn,TT_Task,DT_FixedDrtn,TK_NotStart,HHI.1103,"""""Weld Outer Horizontal Seam between Shell Course # 4 & 5""""",,0,0,10,0,320,320,10,85.333334,0,85.333334,,,,2014-05-07 07:00,2014-05-07 17:00,,2014-05-07 07:00,2014-05-07 17:00,2014-05-07 07:00,2014-05-07 17:00,2014-05-07 07:00,2014-05-07 17:00,2014-05-07 07:00,2014-05-07 17:00,,PT_Normal,,,,,W+jIH9LpRk2X0CKKI0DNZw,e166thn5TSap50IwUIyG/w,,,Y,0,0,,,2014-02-17 15:27,2014-03-01 14:49,admin,admin,
1508,128306,6764,35411,6640,0,N,N,N,CP_Drtn,TT_Task,DT_FixedDrtn,TK_NotStart,HHI.1104,"""""Backgouge & NDT Inside Horizontal Seam between Shell Course# 4 & 5""""",,0,0,10,0,80,80,10,33.066667,0,33.066667,,,,2014-05-08 07:00,2014-05-08 17:00,,2014-05-08 07:00,2014-05-08 17:00,2014-05-08 07:00,2014-05-08 17:00,2014-05-08 07:00,2014-05-08 17:00,2014-05-08 07:00,2014-05-08 17:00,,PT_Normal,,,,,Lc6+mvewTyGI7CBcPL06mA,oUkWKMmWTHu3BaifcROXfA,,,Y,0,0,,,2014-02-17 15:27,2014-03-01 14:49,admin,admin,
1509,128307,6764,35411,6640,0,N,N,N,CP_Drtn,TT_Task,DT_FixedDrtn,TK_NotStart,HHI.1105,"Weld Inner Horizontal Seam between Shell Course # 4 & 5""""",,0,0,10,0,405.333336,405.333336,10,85.333333,0,85.333333,,,,2014-05-10 07:00,2014-05-10 17:00,,2014-05-10 07:00,2014-05-10 17:00,2014-05-10 07:00,2014-05-10 17:00,2014-05-10 07:00,2014-05-10 17:00,2014-05-10 07:00,2014-05-10 17:00,,PT_Normal,,,,,svXNjUKoSU20vWZKRbem7w,IU10EaLcT0WnsT9eLdmIJw,,,Y,0,0,,,2014-02-17 15:27,2014-03-01 14:49,admin,admin,
1510,128308,6764,35411,6640,0,N,N,N,CP_Drtn,TT_Task,DT_FixedDrtn,TK_NotStart,HHI.1106,Quailty Check(Visual Inspection),,0,0,70,0,27.111111,27.111111,70,33.066667,0,33.066667,,,,2014-05-03 07:00,2014-05-10 17:00,,2014-05-03 07:00,2014-05-10 17:00,2014-05-03 07:00,2014-05-10 17:00,2014-05-03 07:00,2014-05-10 17:00,2014-05-03 07:00,2014-05-10 17:00,,PT_Normal,,,,,P4QtJSSzRU6PwpAEqKR4Rg,mtVZY7oYSfS52SKp31itYQ,,,Y,0,0,,,2014-02-17 15:27,2014-03-01 14:49,admin,admin,
1511,128309,6764,35413,6640,0,N,N,N,CP_Drtn,TT_Task,DT_FixedDrtn,TK_NotStart,HHI.1118,Erect & Tack Shell Course # 6 & Instal Stagging Brackets,,0,0,10,0,400,400,10,48,0,48,,,,2014-05-13 07:00,2014-05-13 17:00,,2014-05-13 07:00,2014-05-13 17:00,2014-05-13 07:00,2014-05-13 17:00,2014-05-13 07:00,2014-05-13 17:00,2014-05-13 07:00,2014-05-13 17:00,,PT_Normal,,,,,XBKtTYWXS5yzSY1m54vQAg,Rru+Dd7VT0qeCiB34lVInA,,,Y,0,0,,,2014-02-17 15:27,2014-03-01 14:49,admin,admin,
1512,128310,6764,35413,6640,0,N,N,N,CP_Drtn,TT_Task,DT_FixedDrtn,TK_NotStart,HHI.1120,Backgouge & NDT Inside Vertical Seam,,0,0,10,0,101.333332,101.333332,10,42.666666,0,42.666666,,,,2014-05-15 07:00,2014-05-15 17:00,,2014-05-15 07:00,2014-05-15 17:00,2014-05-15 07:00,2014-05-15 17:00,2014-05-15 07:00,2014-05-15 17:00,2014-05-15 07:00,2014-05-15 17:00,,PT_Normal,,,,,GalbgYWlRCysUlvXMwdx/w,OeuTFJYsS9eol/Apll62rw,,,Y,0,0,,,2014-02-17 15:27,2014-03-01 14:49,admin,admin,
1513,128311,6764,35413,6640,0,N,N,N,CP_Drtn,TT_Task,DT_FixedDrtn,TK_NotStart,HHI.1121,Weld Inside Vertical Seam,,0,0,10,0,191.999998,191.999998,10,42.666666,0,42.666666,,,,2014-05-17 07:00,2014-05-17 17:00,,2014-05-17 07:00,2014-05-17 17:00,2014-05-17 07:00,2014-05-17 17:00,2014-05-17 07:00,2014-05-17 17:00,2014-05-17 07:00,2014-05-17 17:00,,PT_Normal,,,,,FXHK74+xSBaVYaKefc3xuw,jjTG1F4jRcyEXxcit6UyMg,,,Y,0,0,,,2014-02-17 15:27,2014-03-01 14:49,admin,admin,
1514,128312,6764,35413,6640,0,N,N,N,CP_Drtn,TT_Task,DT_FixedDrtn,TK_NotStart,HHI.1119,Weld Outer Vertical Seam/Install the Stairways support on Shell,,0,0,10,0,181.333332,181.333332,10,42.666666,0,42.666666,,,,2014-05-14 07:00,2014-05-14 17:00,,2014-05-14 07:00,2014-05-14 17:00,2014-05-14 07:00,2014-05-14 17:00,2014-05-14 07:00,2014-05-14 17:00,2014-05-14 07:00,2014-05-14 17:00,,PT_Normal,,,,,rG/2jjwiSpO1MvqDJ4TWhQ,J9P3fls6RmGPPLHpA71gKQ,,,Y,0,0,,,2014-02-17 15:27,2014-03-01 14:49,admin,admin,
1515,128313,6764,35413,6640,0,N,N,N,CP_Drtn,TT_Task,DT_FixedDrtn,TK_NotStart,HHI.1122,"""""Weld Outer Horizontal Seam between Shell Course # 5 & 6""""",,0,0,10,0,405.333336,405.333336,10,85.333333,0,85.333333,,,,2014-05-18 07:00,2014-05-18 17:00,,2014-05-18 07:00,2014-05-18 17:00,2014-05-18 07:00,2014-05-18 17:00,2014-05-18 07:00,2014-05-18 17:00,2014-05-18 07:00,2014-05-18 17:00,,PT_Normal,,,,,bHBNspbfQQC8dXkPTkVRuw,puELpSj6QT+5EDDOsEKXeg,,,Y,0,0,,,2014-02-17 15:27,2014-03-01 14:49,admin,admin,
1516,128314,6764,35413,6640,0,N,N,N,CP_Drtn,TT_Task,DT_FixedDrtn,TK_NotStart,HHI.1123,"""""Backgouge & NDT Inside Horizontal Seam between Shell Course# 5 & 6""""",,0,0,10,0,108.444444,108.444444,10,33.066667,0,33.066667,,,,2014-05-19 07:00,2014-05-19 17:00,,2014-05-19 07:00,2014-05-19 17:00,2014-05-19 07:00,2014-05-19 17:00,2014-05-19 07:00,2014-05-19 17:00,2014-05-19 07:00,2014-05-19 17:00,,PT_Normal,,,,,F8MtQcNOQoS/K0Yyk5bTcQ,sNY9klwEQJCtZ/AMu5yBbw,,,Y,0,0,,,2014-02-17 15:27,2014-03-01 14:49,admin,admin,
1517,128315,6764,35413,6640,0,N,N,N,CP_Drtn,TT_Task,DT_FixedDrtn,TK_NotStart,HHI.1124,"Weld Inner Horizontal Seam between Shell Course # 5 & 6""""/Fit,Weld Nozzle on Shell",,0,0,10,0,202.666668,202.666668,10,85.333333,0,85.333333,,,,2014-05-20 07:00,2014-05-20 17:00,,2014-05-20 07:00,2014-05-20 17:00,2014-05-20 07:00,2014-05-20 17:00,2014-05-20 07:00,2014-05-20 17:00,2014-05-20 07:00,2014-05-20 17:00,,PT_Normal,,,,,qroRxBEDTPqPEiLrALj6dw,YNkjerp/Scqb8tlwbXvxGg,,,Y,0,0,,,2014-02-17 15:27,2014-03-01 14:49,admin,admin,
1518,128316,6764,35413,6640,0,N,N,N,CP_Drtn,TT_Task,DT_FixedDrtn,TK_NotStart,HHI.1125,"Quailty Check(Visual Inspection,PT,Air Leak Test for Shell Nozzle))",,0,0,60,0,34.222222,34.222222,60,33.066667,0,33.066667,,,,2014-05-14 07:00,2014-05-20 17:00,,2014-05-14 07:00,2014-05-20 17:00,2014-05-14 07:00,2014-05-20 17:00,2014-05-14 07:00,2014-05-20 17:00,2014-05-14 07:00,2014-05-20 17:00,,PT_Normal,,,,,KEWLz3ZPRxG/Nk4FzSOUBw,5IGDf4IhQPCFRHUnmtEXvA,,,Y,0,0,,,2014-02-17 15:27,2014-03-01 14:49,admin,admin,
1519,128317,6764,35414,6640,0,N,N,N,CP_Drtn,TT_Task,DT_FixedDrtn,TK_NotStart,HHI.1126,Erect & Tack Shell Course # 6 & Install Stagging Brackets,,0,0,10,0,380,380,10,48,0,48,,,,2014-05-17 07:00,2014-05-17 17:00,,2014-05-17 07:00,2014-05-17 17:00,2014-05-17 07:00,2014-05-17 17:00,2014-05-17 07:00,2014-05-17 17:00,2014-05-17 07:00,2014-05-17 17:00,,PT_Normal,,,,,9nrGsY7URUGFzEj6iMB6tg,M4gPgKv2TmuKG1SdiZR5iQ,,,Y,0,0,,,2014-02-17 15:27,2014-03-01 14:49,admin,admin,
1520,128318,6764,35414,6640,0,N,N,N,CP_Drtn,TT_Task,DT_FixedDrtn,TK_NotStart,HHI.1127,Weld Outer Vertical Seam/Install the Stairways support on Shell,,0,0,10,0,160,160,10,42.666666,0,42.666666,,,,2014-05-18 07:00,2014-05-18 17:00,,2014-05-18 07:00,2014-05-18 17:00,2014-05-18 07:00,2014-05-18 17:00,2014-05-18 07:00,2014-05-18 17:00,2014-05-18 07:00,2014-05-18 17:00,,PT_Normal,,,,,GPsqNs/RQkazxJEweDgBpg,PpijNh2hR0qn4pgEmulr4g,,,Y,0,0,,,2014-02-17 15:27,2014-03-01 14:49,admin,admin,
1521,128319,6764,35414,6640,0,N,N,N,CP_Drtn,TT_Task,DT_FixedDrtn,TK_NotStart,HHI.1128,Backgouge & NDT Inside Vertical Seam,,0,0,10,0,101.333332,101.333332,10,42.666666,0,42.666666,,,,2014-05-19 07:00,2014-05-19 17:00,,2014-05-19 07:00,2014-05-19 17:00,2014-05-19 07:00,2014-05-19 17:00,2014-05-19 07:00,2014-05-19 17:00,2014-05-19 07:00,2014-05-19 17:00,,PT_Normal,,,,,ah0ai5RRSSWvbdH0cbBM5w,fGOqpSzqRCu4MwwdmL0OQA,,,Y,0,0,,,2014-02-17 15:27,2014-03-01 14:49,admin,admin,
1522,128320,6764,35414,6640,0,N,N,N,CP_Drtn,TT_Task,DT_FixedDrtn,TK_NotStart,HHI.1129,Weld Inside Vertical Seam,,0,0,10,0,160,160,10,42.666666,0,42.666666,,,,2014-05-20 07:00,2014-05-20 17:00,,2014-05-20 07:00,2014-05-20 17:00,2014-05-20 07:00,2014-05-20 17:00,2014-05-20 07:00,2014-05-20 17:00,2014-05-20 07:00,2014-05-20 17:00,,PT_Normal,,,,,fyONA2itQQ6k/zKOkKVPzw,+5ImVA2/SvOKolXT9NUobg,,,Y,0,0,,,2014-02-17 15:27,2014-03-01 14:49,admin,admin,
1523,128321,6764,35414,6640,0,N,N,N,CP_Drtn,TT_Task,DT_FixedDrtn,TK_NotStart,HHI.1130,"""""Weld Outer Horizontal Seam between Shell Course # 5 & 6""""",,0,0,10,0,405.333336,405.333336,10,85.333333,0,85.333333,,,,2014-05-21 07:00,2014-05-21 17:00,,2014-05-21 07:00,2014-05-21 17:00,2014-05-21 07:00,2014-05-21 17:00,2014-05-21 07:00,2014-05-21 17:00,2014-05-21 07:00,2014-05-21 17:00,,PT_Normal,,,,,q6IBDigVT1CgyxfMr80U0A,n9/GuaP7TcmNG//HqgzKDg,,,Y,0,0,,,2014-02-17 15:27,2014-03-01 14:49,admin,admin,
1524,128322,6764,35414,6640,0,N,N,N,CP_Drtn,TT_Task,DT_FixedDrtn,TK_NotStart,HHI.1131,"""""Backgouge & NDT Inside Horizontal Seam between Shell Course# 5 & 6""""",,0,0,10,0,108.444444,108.444444,10,33.066667,0,33.066667,,,,2014-05-22 07:00,2014-05-22 17:00,,2014-05-22 07:00,2014-05-22 17:00,2014-05-22 07:00,2014-05-22 17:00,2014-05-22 07:00,2014-05-22 17:00,2014-05-22 07:00,2014-05-22 17:00,,PT_Normal,,,,,2tzxMKGbTIu1hKdtj3Qt6Q,fSszkJM1TQSrbK0ffgbXYQ,,,Y,0,0,,,2014-02-17 15:27,2014-03-01 14:49,admin,admin,
1525,128323,6764,35414,6640,0,N,N,N,CP_Drtn,TT_Task,DT_FixedDrtn,TK_NotStart,HHI.1132,"Weld Inner Horizontal Seam between Shell Course # 5 & 6""""/Fit,Weld Nozzle on Shell",,0,0,10,0,202.666668,202.666668,10,85.333333,0,85.333333,,,,2014-05-24 07:00,2014-05-24 17:00,,2014-05-24 07:00,2014-05-24 17:00,2014-05-24 07:00,2014-05-24 17:00,2014-05-24 07:00,2014-05-24 17:00,2014-05-24 07:00,2014-05-24 17:00,,PT_Normal,,,,,Q1G3dhf3TS2FfTd6pgPa7A,yYix0WONQCeZmL0tFa22ew,,,Y,0,0,,,2014-02-17 15:27,2014-03-01 14:49,admin,admin,
1526,128324,6764,35414,6640,0,N,N,N,CP_Drtn,TT_Task,DT_FixedDrtn,TK_NotStart,HHI.1133,"Quailty Check(Visual Inspection,PT,Air Leak Test for Shell Nozzle))",,0,0,60,0,27.111111,27.111111,60,33.066667,0,33.066667,,,,2014-05-18 07:00,2014-05-24 17:00,,2014-05-18 07:00,2014-05-24 17:00,2014-05-18 07:00,2014-05-24 17:00,2014-05-18 07:00,2014-05-24 17:00,2014-05-18 07:00,2014-05-24 17:00,,PT_Normal,,,,,HcNno7HnTSaXmSCLV1IeHg,LrOYeMGSRq2MxjIX+5MA+Q,,,Y,0,0,,,2014-02-17 15:27,2014-03-01 14:49,admin,admin,
1527,128325,6764,35415,6640,0,N,N,N,CP_Drtn,TT_Task,DT_FixedDrtn,TK_NotStart,HHI.1134,Perform RT for Tank#1 & #2,,0,0,10,0,0,0,10,0,0,0,,,,2014-05-25 07:00,2014-05-25 17:00,,2014-05-25 07:00,2014-05-25 17:00,2014-05-25 07:00,2014-05-25 17:00,2014-05-25 07:00,2014-05-25 17:00,2014-05-25 07:00,2014-05-25 17:00,,PT_Normal,,,,,sV7XdLOOSYS1hrElZPINWg,EqwopKted0GNF+1fvK/AJA,,,Y,0,0,,,2014-02-17 15:27,2014-03-01 14:49,admin,admin,
1528,128326,6764,35417,6640,0,N,N,N,CP_Drtn,TT_Task,DT_FixedDrtn,TK_NotStart,HHI.1018,Prepare & Lay Down Bottom Plates,,0,0,20,0,347.999998,347.999998,20,25.6,0,25.6,,,,2014-02-27 07:00,2014-03-01 17:00,,2014-02-27 07:00,2014-03-01 17:00,2014-02-27 07:00,2014-03-01 17:00,2014-02-27 07:00,2014-03-01 17:00,2014-02-27 07:00,2014-03-01 17:00,,PT_Normal,,,,,1ecHTmO3TVGp4AHfp/iauw,i/dugnhYhkK96LPtdgptUg,,,Y,0,0,,,2014-02-17 15:27,2014-03-01 14:49,admin,admin,
1529,128327,6764,35417,6640,0,N,N,N,CP_Drtn,TT_Task,DT_FixedDrtn,TK_NotStart,HHI.1021,Quailty Check (Visual Inspection& Vaccum Box Test),,0,0,120,0,21.333334,21.333334,120,42.666666,0,42.666666,,,,2014-02-27 07:00,2014-03-12 17:00,,2014-02-27 07:00,2014-03-12 17:00,2014-02-27 07:00,2014-03-12 17:00,2014-02-27 07:00,2014-03-12 17:00,2014-02-27 07:00,2014-03-12 17:00,,PT_Normal,,,,,HyUc4WpeSuWkzRUOyPQMrA,EOmVdZWxGU+xUW4BY7rzeA,,,Y,0,0,,,2014-02-17 15:27,2014-03-01 14:49,admin,admin,
1530,128328,6764,35417,6640,0,N,N,N,CP_Drtn,TT_Task,DT_FixedDrtn,TK_NotStart,HHI.1024,"Erect,Fitup of Sump",,30,30,10,0,51.999998,51.999998,10,42.666666,0,42.666666,,,,2014-03-11 07:00,2014-03-11 17:00,,2014-03-08 07:00,2014-03-08 17:00,2014-03-08 07:00,2014-03-08 17:00,2014-03-08 07:00,2014-03-08 17:00,2014-03-11 07:00,2014-03-11 17:00,,PT_Normal,,,,,awvqEFoTTcGo8hxR1q3FdA,v32lHuSghEyNOO8GTnqK3A,,,N,0,0,,,2014-02-17 15:27,2014-03-01 14:49,admin,admin,
1531,128329,6764,35417,6640,0,N,N,N,CP_Drtn,TT_Task,DT_FixedDrtn,TK_NotStart,HHI.1026,Weld Sump,,0,0,10,0,17.066666,17.066666,10,42.666666,0,42.666666,,,,2014-03-12 07:00,2014-03-12 17:00,,2014-03-12 07:00,2014-03-12 17:00,2014-03-12 07:00,2014-03-12 17:00,2014-03-12 07:00,2014-03-12 17:00,2014-03-12 07:00,2014-03-12 17:00,,PT_Normal,,,,,/Eo5CjmFQ4CYp43SBYJ9Fg,rwlw7Mi8y06BddCsGfowtw,,,Y,0,0,,,2014-02-17 15:27,2014-03-01 14:49,admin,admin,
1532,128330,6764,35417,6640,0,N,N,N,CP_Drtn,TT_Task,DT_FixedDrtn,TK_NotStart,HHI.1020,Fit/Tack Bottom Plates-Short Seams,,0,0,20,0,0,0,20,0,0,0,,,,2014-03-03 07:00,2014-03-04 17:00,,2014-03-03 07:00,2014-03-04 17:00,2014-03-03 07:00,2014-03-04 17:00,2014-03-03 07:00,2014-03-04 17:00,2014-03-03 07:00,2014-03-04 17:00,,PT_Normal,,,,,fB7v5QkWS0e2lL7c+rSP2g,AqZyIuqTckCFo46iRimLLw,,,Y,0,0,,,2014-02-17 15:27,2014-03-01 14:49,admin,admin,
1533,128331,6764,35417,6640,0,N,N,N,CP_Drtn,TT_Task,DT_FixedDrtn,TK_NotStart,HHI.1022,Weld Short Seams,,0,0,20,0,0,0,20,0,0,0,,,,2014-03-04 07:00,2014-03-05 17:00,,2014-03-04 07:00,2014-03-05 17:00,2014-03-04 07:00,2014-03-05 17:00,2014-03-04 07:00,2014-03-05 17:00,2014-03-04 07:00,2014-03-05 17:00,,PT_Normal,,,,,kS52a0HSTM+tT77Zt1FHRw,JnD0StBsYU6Wp5Ev9AaZ4Q,,,Y,0,0,,,2014-02-17 15:27,2014-03-01 14:49,admin,admin,
1534,128332,6764,35417,6640,0,N,N,N,CP_Drtn,TT_Task,DT_FixedDrtn,TK_NotStart,HHI.1023,Fit/Tack Bottom Plates-Long Seams,,0,0,20,0,0,0,20,0,0,0,,,,2014-03-06 07:00,2014-03-08 17:00,,2014-03-06 07:00,2014-03-08 17:00,2014-03-06 07:00,2014-03-08 17:00,2014-03-06 07:00,2014-03-08 17:00,2014-03-06 07:00,2014-03-08 17:00,,PT_Normal,,,,,MWo4CKSMTQKhA+mBWTaoNA,Z6uoYstX8EubpzCpFQ7Shw,,,Y,0,0,,,2014-02-17 15:27,2014-03-01 14:49,admin,admin,
1535,128333,6764,35417,6640,0,N,N,N,CP_Drtn,TT_Task,DT_FixedDrtn,TK_NotStart,HHI.1025,Weld Long Seams,,0,0,50,0,0,0,50,0,0,0,,,,2014-03-08 07:00,2014-03-12 17:00,,2014-03-08 07:00,2014-03-12 17:00,2014-03-08 07:00,2014-03-12 17:00,2014-03-08 07:00,2014-03-12 17:00,2014-03-08 07:00,2014-03-12 17:00,,PT_Normal,,,,,qqopn6P9RN+N3e4AKoh1Pg,u7zyNvZKH0ufVyncGgm2Bg,,,Y,0,0,,,2014-02-17 15:27,2014-03-01 14:49,admin,admin,
1536,128334,6764,35418,6640,0,N,N,N,CP_Drtn,TT_Task,DT_FixedDrtn,TK_NotStart,HHI.1019,Perform RT for Tank#1 & #2,,0,0,10,0,0,0,10,0,0,0,,,,2014-02-27 07:00,2014-02-27 17:00,,2014-02-27 07:00,2014-02-27 17:00,2014-02-27 07:00,2014-02-27 17:00,2014-02-27 07:00,2014-02-27 17:00,2014-02-27 07:00,2014-02-27 17:00,,PT_Normal,,,,,yJxqi0KBRquyX9+/zSexkA,jHDIYLCM2Uu+vVJjZVQXMw,,,Y,0,0,,,2014-02-17 15:27,2014-03-01 14:49,admin,admin,
1537,128335,6764,35419,6640,0,N,N,N,CP_Drtn,TT_Task,DT_FixedDrtn,TK_NotStart,HHI.1015,"Install Sealent,Erect & Tack of Annular Plates",,0,0,10,0,80,80,10,8,0,8,,,,2014-02-25 07:00,2014-02-25 17:00,,2014-02-25 07:00,2014-02-25 17:00,2014-02-25 07:00,2014-02-25 17:00,2014-02-25 07:00,2014-02-25 17:00,2014-02-25 07:00,2014-02-25 17:00,,PT_Normal,,,,,UiC4q/sEQA+Wqz0CwOH+Cg,7GsZ4FEFvEmDKSOoqSdWYw,,,Y,0,0,,,2014-02-17 15:27,2014-03-01 14:49,admin,admin,
1538,128336,6764,35419,6640,0,N,N,N,CP_Drtn,TT_Task,DT_FixedDrtn,TK_NotStart,HHI.1017,Welding of Annular Plates,,0,0,10,0,180,180,10,40,0,40,,,,2014-02-26 07:00,2014-02-26 17:00,,2014-02-26 07:00,2014-02-26 17:00,2014-02-26 07:00,2014-02-26 17:00,2014-02-26 07:00,2014-02-26 17:00,2014-02-26 07:00,2014-02-26 17:00,,PT_Normal,,,,,jTwDzPT4QJS4V6VBmOENjA,2zSRmFzH9U2a6DBT0hJ+gw,,,Y,0,0,,,2014-02-17 15:27,2014-03-01 14:49,admin,admin,
1539,128337,6764,35419,6640,0,N,N,N,CP_Drtn,TT_Task,DT_FixedDrtn,TK_NotStart,HHI.1016,"Quailty Check (Visual Inspection,PT & Vaccum Box Test)",,0,0,20,0,40,40,20,40,0,40,,,,2014-02-25 07:00,2014-02-26 17:00,,2014-02-25 07:00,2014-02-26 17:00,2014-02-25 07:00,2014-02-26 17:00,2014-02-25 07:00,2014-02-26 17:00,2014-02-25 07:00,2014-02-26 17:00,,PT_Normal,,,,,D4cn4yGKTWWB+HuoMHDdWw,VJDW85UQGEiHGqTTOrx/wg,,,Y,0,0,,,2014-02-17 15:27,2014-03-01 14:49,admin,admin,
1540,128338,6764,35421,6640,0,N,N,N,CP_Drtn,TT_Task,DT_FixedDrtn,TK_NotStart,HHI.1158,Erect & Tack Shell Course # 7 & Install Stagging Brackets,,0,0,10,0,420,420,10,32,0,32,,,,2014-06-15 07:00,2014-06-15 17:00,,2014-06-15 07:00,2014-06-15 17:00,2014-06-15 07:00,2014-06-15 17:00,2014-06-15 07:00,2014-06-15 17:00,2014-06-15 07:00,2014-06-15 17:00,,PT_Normal,,,,,MAzxoLssT36MhR4Rhs82Lw,J/fdFs9MSiybliM/Vhv6eA,,,Y,0,0,,,2014-02-17 15:27,2014-03-01 14:49,admin,admin,
1541,128339,6764,35421,6640,0,N,N,N,CP_Drtn,TT_Task,DT_FixedDrtn,TK_NotStart,HHI.1159,Weld Outer Vertical Seam /Install the Stairways support on Shell,,0,0,10,0,170.666666,170.666666,10,42.666666,0,42.666666,,,,2014-06-16 07:00,2014-06-16 17:00,,2014-06-16 07:00,2014-06-16 17:00,2014-06-16 07:00,2014-06-16 17:00,2014-06-16 07:00,2014-06-16 17:00,2014-06-16 07:00,2014-06-16 17:00,,PT_Normal,,,,,6TIcHltURwOq+Shgldj3RA,3niZBD9qT/OtZJshV3IlmA,,,Y,0,0,,,2014-02-17 15:27,2014-03-01 14:49,admin,admin,
1542,128340,6764,35421,6640,0,N,N,N,CP_Drtn,TT_Task,DT_FixedDrtn,TK_NotStart,HHI.1160,Backgouge & NDT Inside Vertical Seam,,0,0,10,0,90.666666,90.666666,10,42.666666,0,42.666666,,,,2014-06-17 07:00,2014-06-17 17:00,,2014-06-17 07:00,2014-06-17 17:00,2014-06-17 07:00,2014-06-17 17:00,2014-06-17 07:00,2014-06-17 17:00,2014-06-17 07:00,2014-06-17 17:00,,PT_Normal,,,,,ScHrt7uOSC+tLMI8DqJziQ,Z4xoGc2oTiG7Zs5i97jxeQ,,,Y,0,0,,,2014-02-17 15:27,2014-03-01 14:49,admin,admin,
1543,128341,6764,35421,6640,0,N,N,N,CP_Drtn,TT_Task,DT_FixedDrtn,TK_NotStart,HHI.1161,Weld Inside Vertical Seam,,0,0,10,0,170.666666,170.666666,10,42.666666,0,42.666666,,,,2014-06-18 07:00,2014-06-18 17:00,,2014-06-18 07:00,2014-06-18 17:00,2014-06-18 07:00,2014-06-18 17:00,2014-06-18 07:00,2014-06-18 17:00,2014-06-18 07:00,2014-06-18 17:00,,PT_Normal,,,,,P/FyX5qZRmye3HnC+a58CA,LlKP+YyaSbGXDiVdrW/T0w,,,Y,0,0,,,2014-02-17 15:27,2014-03-01 14:49,admin,admin,
1544,128342,6764,35421,6640,0,N,N,N,CP_Drtn,TT_Task,DT_FixedDrtn,TK_NotStart,HHI.1162,"""""Weld Outer Horizontal Seam between Shell Course # 6 & 7""""",,0,0,10,0,167.111111,167.111111,10,33.066667,0,33.066667,,,,2014-06-19 07:00,2014-06-19 17:00,,2014-06-19 07:00,2014-06-19 17:00,2014-06-19 07:00,2014-06-19 17:00,2014-06-19 07:00,2014-06-19 17:00,2014-06-19 07:00,2014-06-19 17:00,,PT_Normal,,,,,iZmtobhxS5um0of3N3CF2w,9PGDv3edRP+A5aIAGG6Cxg,,,Y,0,0,,,2014-02-17 15:27,2014-03-01 14:49,admin,admin,
1545,128343,6764,35421,6640,0,N,N,N,CP_Drtn,TT_Task,DT_FixedDrtn,TK_NotStart,HHI.1163,"""""Backgouge & NDT Inside Horizontal Seam between Shell Course# 6 & 7""""",,0,0,10,0,111.999998,111.999998,10,42.666667,0,42.666667,,,,2014-06-21 07:00,2014-06-21 17:00,,2014-06-21 07:00,2014-06-21 17:00,2014-06-21 07:00,2014-06-21 17:00,2014-06-21 07:00,2014-06-21 17:00,2014-06-21 07:00,2014-06-21 17:00,,PT_Normal,,,,,Us5hxOOzTkWksiXKhG2mYA,71VUCETLQ72FLy8SOlzo3Q,,,Y,0,0,,,2014-02-17 15:27,2014-03-01 14:49,admin,admin,
1546,128344,6764,35421,6640,0,N,N,N,CP_Drtn,TT_Task,DT_FixedDrtn,TK_NotStart,HHI.1164,"Weld Inner Horizontal Seam between Shell Course # 6 & 7""""",,0,0,10,0,188.444444,188.444444,10,33.066667,0,33.066667,,,,2014-06-22 07:00,2014-06-22 17:00,,2014-06-22 07:00,2014-06-22 17:00,2014-06-22 07:00,2014-06-22 17:00,2014-06-22 07:00,2014-06-22 17:00,2014-06-22 07:00,2014-06-22 17:00,,PT_Normal,,,,,Z1rqilqkRo2X0+e37GzJvw,UnHBgqhXTgauap/pMvDXKQ,,,Y,0,0,,,2014-02-17 15:27,2014-03-01 14:49,admin,admin,
1547,128345,6764,35421,6640,0,N,N,N,CP_Drtn,TT_Task,DT_FixedDrtn,TK_NotStart,HHI.1166,Quailty Check(Visual Inspection & PT& Air Leak Test for Shell Nozzle & Pad),,0,0,70,0,55.555555,55.555555,70,33.066667,0,33.066667,,,,2014-06-15 07:00,2014-06-22 17:00,,2014-06-15 07:00,2014-06-22 17:00,2014-06-15 07:00,2014-06-22 17:00,2014-06-15 07:00,2014-06-22 17:00,2014-06-15 07:00,2014-06-22 17:00,,PT_Normal,,,,,E6isSdZgR46JCN7BCu9itQ,pCa2ZG+bS0y1ecbkZvaaMA,,,Y,0,0,,,2014-02-17 15:27,2014-03-01 14:49,admin,admin,
1548,128346,6764,35421,6640,0,N,N,N,CP_Drtn,TT_Task,DT_FixedDrtn,TK_NotStart,HHI.1165,"Fit,Weld Nozzle on Shell",,0,0,10,0,0,0,10,0,0,0,,,,2014-06-22 07:00,2014-06-22 17:00,,2014-06-22 07:00,2014-06-22 17:00,2014-06-22 07:00,2014-06-22 17:00,2014-06-22 07:00,2014-06-22 17:00,2014-06-22 07:00,2014-06-22 17:00,,PT_Normal,,,,,N/KMQYg2TYuz4u4cIqQXbw,ALZ7zRWNQ0yhPeGC6DgU0w,,,Y,0,0,,,2014-02-17 15:27,2014-03-01 14:49,admin,admin,
1549,128347,6764,35422,6640,0,N,N,N,CP_Drtn,TT_Task,DT_FixedDrtn,TK_NotStart,HHI.1167,Erect & Tack Shell Course # 7 & Install Stagging Brackets,,0,0,10,0,400,400,10,48,0,48,,,,2014-06-17 07:00,2014-06-17 17:00,,2014-06-17 07:00,2014-06-17 17:00,2014-06-17 07:00,2014-06-17 17:00,2014-06-17 07:00,2014-06-17 17:00,2014-06-17 07:00,2014-06-17 17:00,,PT_Normal,,,,,auDg0q+oSAeoQB3Uow6iWw,59LuyzW4QOC2vZHliluiKg,,,Y,0,0,,,2014-02-17 15:27,2014-03-01 14:49,admin,admin,
1550,128348,6764,35422,6640,0,N,N,N,CP_Drtn,TT_Task,DT_FixedDrtn,TK_NotStart,HHI.1168,Weld Outer Vertical Seam/Install the Stairways support on Shell,,0,0,10,0,160,160,10,42.666666,0,42.666666,,,,2014-06-18 07:00,2014-06-18 17:00,,2014-06-18 07:00,2014-06-18 17:00,2014-06-18 07:00,2014-06-18 17:00,2014-06-18 07:00,2014-06-18 17:00,2014-06-18 07:00,2014-06-18 17:00,,PT_Normal,,,,,Ar/J+2Q9SAusonlMnf3e9Q,jVT23/SpSeaE+g6hKwFFJg,,,Y,0,0,,,2014-02-17 15:27,2014-03-01 14:49,admin,admin,
1551,128349,6764,35422,6640,0,N,N,N,CP_Drtn,TT_Task,DT_FixedDrtn,TK_NotStart,HHI.1169,Backgouge & NDT Inside Vertical Seam,,0,0,10,0,90.666666,90.666666,10,42.666666,0,42.666666,,,,2014-06-19 07:00,2014-06-19 17:00,,2014-06-19 07:00,2014-06-19 17:00,2014-06-19 07:00,2014-06-19 17:00,2014-06-19 07:00,2014-06-19 17:00,2014-06-19 07:00,2014-06-19 17:00,,PT_Normal,,,,,GO2hNdIRSg+eTgNrgvXJ0g,Vc/rrT4cQkmT4nB/veE9zQ,,,Y,0,0,,,2014-02-17 15:27,2014-03-01 14:49,admin,admin,
1552,128350,6764,35422,6640,0,N,N,N,CP_Drtn,TT_Task,DT_FixedDrtn,TK_NotStart,HHI.1170,Weld Inside Vertical Seam,,0,0,10,0,160,160,10,42.666666,0,42.666666,,,,2014-06-21 07:00,2014-06-21 17:00,,2014-06-21 07:00,2014-06-21 17:00,2014-06-21 07:00,2014-06-21 17:00,2014-06-21 07:00,2014-06-21 17:00,2014-06-21 07:00,2014-06-21 17:00,,PT_Normal,,,,,B292P1fjSPm7SRZc13LLHw,AvyH6a0uREi2MHkX0pJD4g,,,Y,0,0,,,2014-02-17 15:27,2014-03-01 14:49,admin,admin,
1553,128351,6764,35422,6640,0,N,N,N,CP_Drtn,TT_Task,DT_FixedDrtn,TK_NotStart,HHI.1171,"""""Weld Outer Horizontal Seam between Shell Course # 6 & 7""""",,0,0,10,0,160,160,10,33.066667,0,33.066667,,,,2014-06-22 07:00,2014-06-22 17:00,,2014-06-22 07:00,2014-06-22 17:00,2014-06-22 07:00,2014-06-22 17:00,2014-06-22 07:00,2014-06-22 17:00,2014-06-22 07:00,2014-06-22 17:00,,PT_Normal,,,,,19cbA766QUKPaC4d2qrrjQ,TRD5JqmNQTe45CvjSsgRag,,,Y,0,0,,,2014-02-17 15:27,2014-03-01 14:49,admin,admin,
1554,128352,6764,35422,6640,0,N,N,N,CP_Drtn,TT_Task,DT_FixedDrtn,TK_NotStart,HHI.1172,"""""Backgouge & NDT Inside Horizontal Seam between Shell Course#6 & 7""""",,0,0,10,0,122.666664,122.666664,10,42.666667,0,42.666667,,,,2014-06-23 07:00,2014-06-23 17:00,,2014-06-23 07:00,2014-06-23 17:00,2014-06-23 07:00,2014-06-23 17:00,2014-06-23 07:00,2014-06-23 17:00,2014-06-23 07:00,2014-06-23 17:00,,PT_Normal,,,,,7sCeChmTSXOGu7XyfWbI8Q,vKesf0VnT7SkGvDx/lk03Q,,,Y,0,0,,,2014-02-17 15:27,2014-03-01 14:49,admin,admin,
1555,128353,6764,35422,6640,0,N,N,N,CP_Drtn,TT_Task,DT_FixedDrtn,TK_NotStart,HHI.1173,"Weld Inner Horizontal Seam between Shell Course #6 & 7""""",,0,0,10,0,188.444444,188.444444,10,33.066667,0,33.066667,,,,2014-06-24 07:00,2014-06-24 17:00,,2014-06-24 07:00,2014-06-24 17:00,2014-06-24 07:00,2014-06-24 17:00,2014-06-24 07:00,2014-06-24 17:00,2014-06-24 07:00,2014-06-24 17:00,,PT_Normal,,,,,lqzeCnSsQyyNiN2rBlzE7Q,F8u11/2mTaKcUf/iueIBbw,,,Y,0,0,,,2014-02-17 15:27,2014-03-01 14:49,admin,admin,
1556,128354,6764,35422,6640,0,N,N,N,CP_Drtn,TT_Task,DT_FixedDrtn,TK_NotStart,HHI.1175,Quailty Check(Visual Inspection & PT for Shell Nozzle & Pad),,0,0,70,0,55.555555,55.555555,70,33.066667,0,33.066667,,,,2014-06-17 07:00,2014-06-24 17:00,,2014-06-17 07:00,2014-06-24 17:00,2014-06-17 07:00,2014-06-24 17:00,2014-06-17 07:00,2014-06-24 17:00,2014-06-17 07:00,2014-06-24 17:00,,PT_Normal,,,,,HvbjmLZtTgyTlTi2YAWgBw,LQVKUEi9QYeqFiR3yMNUDw,,,Y,0,0,,,2014-02-17 15:27,2014-03-01 14:49,admin,admin,
1557,128355,6764,35422,6640,0,N,N,N,CP_Drtn,TT_Task,DT_FixedDrtn,TK_NotStart,HHI.1174,"Fit,Weld Nozzle on Shell",,0,0,10,0,0,0,10,0,0,0,,,,2014-06-24 07:00,2014-06-24 17:00,,2014-06-24 07:00,2014-06-24 17:00,2014-06-24 07:00,2014-06-24 17:00,2014-06-24 07:00,2014-06-24 17:00,2014-06-24 07:00,2014-06-24 17:00,,PT_Normal,,,,,6RJA1AChQZeLeRo6lkLCGA,mlspKW46hUaYWNyQ/BTQTg,,,Y,0,0,,,2014-02-17 15:27,2014-03-01 14:49,admin,admin,
1558,128356,6764,35423,6640,0,N,N,N,CP_Drtn,TT_Task,DT_FixedDrtn,TK_NotStart,HHI.1176,Perform RT for Tank#1 & #2,,0,0,10,0,0,0,10,0,0,0,,,,2014-06-25 07:00,2014-06-25 17:00,,2014-06-25 07:00,2014-06-25 17:00,2014-06-25 07:00,2014-06-25 17:00,2014-06-25 07:00,2014-06-25 17:00,2014-06-25 07:00,2014-06-25 17:00,,PT_Normal,,,,,IYQeT5NMSaG+RVMznhgUXg,qPup9iKr3ka/55OpWgfT3A,,,Y,0,0,,,2014-02-17 15:27,2014-03-01 14:49,admin,admin,
1559,128357,6764,35425,6640,0,N,N,N,CP_Drtn,TT_Task,DT_FixedDrtn,TK_NotStart,HHI.1053,Erect & Tack Shell Course # 2& Install Stagging Brackets,,0,0,10,0,340,340,10,48,0,48,,,,2014-03-24 07:00,2014-03-24 17:00,,2014-03-24 07:00,2014-03-24 17:00,2014-03-24 07:00,2014-03-24 17:00,2014-03-24 07:00,2014-03-24 17:00,2014-03-24 07:00,2014-03-24 17:00,,PT_Normal,,,,,szInWTRTRjewYGT7w9hNhQ,hwRMt4VHQwu+R74bo37vWA,,,Y,0,0,,,2014-02-17 15:27,2014-03-01 14:49,admin,admin,
1560,128358,6764,35425,6640,0,N,N,N,CP_Drtn,TT_Task,DT_FixedDrtn,TK_NotStart,HHI.1054,Weld Outer Vertical Seam/Install the Stairways support on Shell,,0,0,10,0,384.000002,384.000002,10,85.333333,0,85.333333,,,,2014-03-25 07:00,2014-03-25 17:00,,2014-03-25 07:00,2014-03-25 17:00,2014-03-25 07:00,2014-03-25 17:00,2014-03-25 07:00,2014-03-25 17:00,2014-03-25 07:00,2014-03-25 17:00,,PT_Normal,,,,,OR6WBNj4R1i4lUsESAhUGQ,maydz4p2TIia+9wvFxgCjw,,,Y,0,0,,,2014-02-17 15:27,2014-03-01 14:49,admin,admin,
1561,128359,6764,35425,6640,0,N,N,N,CP_Drtn,TT_Task,DT_FixedDrtn,TK_NotStart,HHI.1055,"Backgouge,Grinding & NDT Inside Vertical Seam",,0,0,10,0,97.111111,97.111111,10,33.066667,0,33.066667,,,,2014-03-26 07:00,2014-03-26 17:00,,2014-03-26 07:00,2014-03-26 17:00,2014-03-26 07:00,2014-03-26 17:00,2014-03-26 07:00,2014-03-26 17:00,2014-03-26 07:00,2014-03-26 17:00,,PT_Normal,,,,,j1nwyE+zTIeXP/TC2wf7pw,mggKz3G+Rb23ITnJYzPOHQ,,,Y,0,0,,,2014-02-17 15:27,2014-03-01 14:49,admin,admin,
1562,128360,6764,35425,6640,0,N,N,N,CP_Drtn,TT_Task,DT_FixedDrtn,TK_NotStart,HHI.1056,Weld Inside Vertical Seam,,0,0,10,0,202.666668,202.666668,10,85.333333,0,85.333333,,,,2014-03-27 07:00,2014-03-27 17:00,,2014-03-27 07:00,2014-03-27 17:00,2014-03-27 07:00,2014-03-27 17:00,2014-03-27 07:00,2014-03-27 17:00,2014-03-27 07:00,2014-03-27 17:00,,PT_Normal,,,,,RTq1wxZKSOWnEzkLp8ooLg,cchqaBaUTW6p7l0BJ49woA,,,Y,0,0,,,2014-02-17 15:27,2014-03-01 14:49,admin,admin,
1563,128361,6764,35425,6640,0,N,N,N,CP_Drtn,TT_Task,DT_FixedDrtn,TK_NotStart,HHI.1057,Weld Outer Horizontal Seam between Shell Course # 1 & 2,,0,0,30,0,608,608,30,166.4,0,166.4,,,,2014-03-29 07:00,2014-03-31 17:00,,2014-03-29 07:00,2014-03-31 17:00,2014-03-29 07:00,2014-03-31 17:00,2014-03-29 07:00,2014-03-31 17:00,2014-03-29 07:00,2014-03-31 17:00,,PT_Normal,,,,,9JZ+rY2tSdWzRmCXp7wPwQ,XKzzRLOLTuaZ4DwLGZZ3cg,,,Y,0,0,,,2014-02-17 15:27,2014-03-01 14:49,admin,admin,
1564,128362,6764,35425,6640,0,N,N,N,CP_Drtn,TT_Task,DT_FixedDrtn,TK_NotStart,HHI.1058,Backgouge & NDT Inside Horizontal Seam between Shell Course# 1 & 2,,0,0,10,0,122.666668,122.666668,10,85.333333,0,85.333333,,,,2014-04-01 07:00,2014-04-01 17:00,,2014-04-01 07:00,2014-04-01 17:00,2014-04-01 07:00,2014-04-01 17:00,2014-04-01 07:00,2014-04-01 17:00,2014-04-01 07:00,2014-04-01 17:00,,PT_Normal,,,,,R+56gNCsRFOIrBJthDy7/Q,14P6S9m2SZqlbNiHK//JgQ,,,Y,0,0,,,2014-02-17 15:27,2014-03-01 14:49,admin,admin,
1565,128363,6764,35425,6640,0,N,N,N,CP_Drtn,TT_Task,DT_FixedDrtn,TK_NotStart,HHI.1059,"Weld Inner Horizontal Seam between Shell Course # 1 & 2""""",,0,0,10,0,608,608,10,166.4,0,166.4,,,,2014-04-02 07:00,2014-04-02 17:00,,2014-04-02 07:00,2014-04-02 17:00,2014-04-02 07:00,2014-04-02 17:00,2014-04-02 07:00,2014-04-02 17:00,2014-04-02 07:00,2014-04-02 17:00,,PT_Normal,,,,,AzCMgOSURne9u/QyQ8temQ,oIVF7CkeQZCqw7basJPv5w,,,Y,0,0,,,2014-02-17 15:27,2014-03-01 14:49,admin,admin,
1566,128364,6764,35425,6640,0,N,N,N,CP_Drtn,TT_Task,DT_FixedDrtn,TK_NotStart,HHI.1060,Weld Shell Course# 1 to Annular Plate (from inside),,0,0,10,0,405.333336,405.333336,10,85.333333,0,85.333333,,,,2014-04-03 07:00,2014-04-03 17:00,,2014-04-03 07:00,2014-04-03 17:00,2014-04-03 07:00,2014-04-03 17:00,2014-04-03 07:00,2014-04-03 17:00,2014-04-03 07:00,2014-04-03 17:00,,PT_Normal,,,,,YhLiKThLQJSugMtH1HsOUA,zSfOExBoQQ69gi7lq3xMKw,,,Y,0,0,,,2014-02-17 15:27,2014-03-01 14:49,admin,admin,
1567,128365,6764,35425,6640,0,N,N,N,CP_Drtn,TT_Task,DT_FixedDrtn,TK_NotStart,HHI.1061,"Perform PT from inside,Complete the welding from outside & Perform Vaccum Box Testing",,0,0,20,0,426.666665,426.666665,20,128,0,128,,,,2014-04-05 07:00,2014-04-06 17:00,,2014-04-05 07:00,2014-04-06 17:00,2014-04-05 07:00,2014-04-06 17:00,2014-04-05 07:00,2014-04-06 17:00,2014-04-05 07:00,2014-04-06 17:00,,PT_Normal,,,,,7WXCQ5AwQ2KDyoE3krIz2Q,dIAiODTxRbS5qcf02ODhjg,,,Y,0,0,,,2014-02-17 15:27,2014-03-01 14:49,admin,admin,
1568,128366,6764,35425,6640,0,N,N,N,CP_Drtn,TT_Task,DT_FixedDrtn,TK_NotStart,HHI.1063,Quailty Check(Visual Inspection),,0,0,140,0,34.222222,34.222222,140,33.066667,0,33.066667,,,,2014-03-24 07:00,2014-04-08 17:00,,2014-03-24 07:00,2014-04-08 17:00,2014-03-24 07:00,2014-04-08 17:00,2014-03-24 07:00,2014-04-08 17:00,2014-03-24 07:00,2014-04-08 17:00,,PT_Normal,,,,,9EYQvJoQQNenvdyjjLzxfw,FX+eMbfPQZKcMrBCCA8M5w,,,Y,0,0,,,2014-02-17 15:27,2014-03-01 14:49,admin,admin,
1569,128367,6764,35425,6640,0,N,N,N,CP_Drtn,TT_Task,DT_FixedDrtn,TK_NotStart,HHI.1062,Weld Bottom Sketch Plates to Annular Plate,,0,0,20,0,0,0,20,0,0,0,,,,2014-04-07 07:00,2014-04-08 17:00,,2014-04-07 07:00,2014-04-08 17:00,2014-04-07 07:00,2014-04-08 17:00,2014-04-07 07:00,2014-04-08 17:00,2014-04-07 07:00,2014-04-08 17:00,,PT_Normal,,,,,Ltx3D4kqRwSGIsI7Y+R1pw,yLzDaVu5pU+CraXDWNW+4A,,,Y,0,0,,,2014-02-17 15:27,2014-03-01 14:49,admin,admin,
1570,128368,6764,35426,6640,0,N,N,N,CP_Drtn,TT_Task,DT_FixedDrtn,TK_NotStart,HHI.1064,Perform RT for Tank#1 & #2,,0,0,10,0,0,0,10,0,0,0,,,,2014-04-09 07:00,2014-04-09 17:00,,2014-04-09 07:00,2014-04-09 17:00,2014-04-09 07:00,2014-04-09 17:00,2014-04-09 07:00,2014-04-09 17:00,2014-04-09 07:00,2014-04-09 17:00,,PT_Normal,,,,,IEycjkJlRSWVjeDYk3a6MQ,GWmJtkqsBUq0z1uOQfCLww,,,Y,0,0,,,2014-02-17 15:27,2014-03-01 14:49,admin,admin,
1571,128369,6764,35427,6640,0,N,N,N,CP_Drtn,TT_Task,DT_FixedDrtn,TK_NotStart,HHI.1043,Weld Outer Vertical Seam/Install the Stairways support on Shell,,0,0,10,0,384.000002,384.000002,10,85.333333,0,85.333333,,,,2014-03-23 07:00,2014-03-23 17:00,,2014-03-23 07:00,2014-03-23 17:00,2014-03-23 07:00,2014-03-23 17:00,2014-03-23 07:00,2014-03-23 17:00,2014-03-23 07:00,2014-03-23 17:00,,PT_Normal,,,,,MmwA68uaSYuoEJWE7qymXg,WdSX8h6yTQqe1/hl2V+lcA,,,Y,0,0,,,2014-02-17 15:27,2014-03-01 14:49,admin,admin,
1572,128370,6764,35427,6640,0,N,N,N,CP_Drtn,TT_Task,DT_FixedDrtn,TK_NotStart,HHI.1044,"Backgouge,Grinding & NDT Inside Vertical Seam",,0,0,10,0,101.333333,101.333333,10,33.066667,0,33.066667,,,,2014-03-24 07:00,2014-03-24 17:00,,2014-03-24 07:00,2014-03-24 17:00,2014-03-24 07:00,2014-03-24 17:00,2014-03-24 07:00,2014-03-24 17:00,2014-03-24 07:00,2014-03-24 17:00,,PT_Normal,,,,,70XlqPCPQ46dhCr1UWj0GQ,A5OZqoRhT82pbNbnwnKb4A,,,Y,0,0,,,2014-02-17 15:27,2014-03-01 14:49,admin,admin,
1573,128371,6764,35427,6640,0,N,N,N,CP_Drtn,TT_Task,DT_FixedDrtn,TK_NotStart,HHI.1045,Weld Inside Vertical Seam,,0,0,10,0,202.666668,202.666668,10,85.333333,0,85.333333,,,,2014-03-25 07:00,2014-03-25 17:00,,2014-03-25 07:00,2014-03-25 17:00,2014-03-25 07:00,2014-03-25 17:00,2014-03-25 07:00,2014-03-25 17:00,2014-03-25 07:00,2014-03-25 17:00,,PT_Normal,,,,,sZA1R5GmSsysaqNBH5kC2Q,h0+iKTxZTUKGnnF2vbxz9w,,,Y,0,0,,,2014-02-17 15:27,2014-03-01 14:49,admin,admin,
1574,128372,6764,35427,6640,0,N,N,N,CP_Drtn,TT_Task,DT_FixedDrtn,TK_NotStart,HHI.1046,Weld Outer Horizontal Seam between Shell Course # 1 & 2,,0,0,30,0,608,608,30,166.4,0,166.4,,,,2014-03-26 07:00,2014-03-29 17:00,,2014-03-26 07:00,2014-03-29 17:00,2014-03-26 07:00,2014-03-29 17:00,2014-03-26 07:00,2014-03-29 17:00,2014-03-26 07:00,2014-03-29 17:00,,PT_Normal,,,,,jXpmgCQcR9iqB6bbim5Y0w,06rvLb3xTIqifYvuihqdRw,,,Y,0,0,,,2014-02-17 15:27,2014-03-01 14:49,admin,admin,
1575,128373,6764,35427,6640,0,N,N,N,CP_Drtn,TT_Task,DT_FixedDrtn,TK_NotStart,HHI.1047,"""""Backgouge & NDT Inside Horizontal Seam between Shell Course# 1 & 2""""",,0,0,10,0,122.666668,122.666668,10,85.333333,0,85.333333,,,,2014-03-30 07:00,2014-03-30 17:00,,2014-03-30 07:00,2014-03-30 17:00,2014-03-30 07:00,2014-03-30 17:00,2014-03-30 07:00,2014-03-30 17:00,2014-03-30 07:00,2014-03-30 17:00,,PT_Normal,,,,,YKhKjspBROqfulrMxL9qrA,HmrJubckRv6zGqwx33uYGg,,,Y,0,0,,,2014-02-17 15:27,2014-03-01 14:49,admin,admin,
1576,128374,6764,35427,6640,0,N,N,N,CP_Drtn,TT_Task,DT_FixedDrtn,TK_NotStart,HHI.1048,"Weld Inner Horizontal Seam between Shell Course # 1 & 2""""",,0,0,10,0,608,608,10,166.4,0,166.4,,,,2014-03-31 07:00,2014-03-31 17:00,,2014-03-31 07:00,2014-03-31 17:00,2014-03-31 07:00,2014-03-31 17:00,2014-03-31 07:00,2014-03-31 17:00,2014-03-31 07:00,2014-03-31 17:00,,PT_Normal,,,,,+wjxEJUvQQCgm5dwP87a/g,V5ynLFowSuuH7dy6Cy40LA,,,Y,0,0,,,2014-02-17 15:27,2014-03-01 14:49,admin,admin,
1577,128375,6764,35427,6640,0,N,N,N,CP_Drtn,TT_Task,DT_FixedDrtn,TK_NotStart,HHI.1049,Weld Shell Course# 1 to Annular Plate (from inside),,0,0,10,0,405.333336,405.333336,10,85.333333,0,85.333333,,,,2014-04-01 07:00,2014-04-01 17:00,,2014-04-01 07:00,2014-04-01 17:00,2014-04-01 07:00,2014-04-01 17:00,2014-04-01 07:00,2014-04-01 17:00,2014-04-01 07:00,2014-04-01 17:00,,PT_Normal,,,,,/FA4M5sPQ1+OLY/dWrDlDw,Ky1BBrIxR0mqt1QWto19ww,,,Y,0,0,,,2014-02-17 15:27,2014-03-01 14:49,admin,admin,
1578,128376,6764,35427,6640,0,N,N,N,CP_Drtn,TT_Task,DT_FixedDrtn,TK_NotStart,HHI.1050,"Perform PT from inside,Complete the welding from outside & Perform Vaccum Box Testing",,0,0,20,0,426.666665,426.666665,20,128,0,128,,,,2014-04-02 07:00,2014-04-03 17:00,,2014-04-02 07:00,2014-04-03 17:00,2014-04-02 07:00,2014-04-03 17:00,2014-04-02 07:00,2014-04-03 17:00,2014-04-02 07:00,2014-04-03 17:00,,PT_Normal,,,,,I8pp6k65RzSEaAAjwSSW7g,ZC3nA+5NQAid87LNziXj4Q,,,Y,0,0,,,2014-02-17 15:27,2014-03-01 14:49,admin,admin,
1579,128377,6764,35427,6640,0,N,N,N,CP_Drtn,TT_Task,DT_FixedDrtn,TK_NotStart,HHI.1052,Quailty Check(Visual Inspection),,0,0,140,0,27.111111,27.111111,140,33.066667,0,33.066667,,,,2014-03-22 07:00,2014-04-06 17:00,,2014-03-22 07:00,2014-04-06 17:00,2014-03-22 07:00,2014-04-06 17:00,2014-03-22 07:00,2014-04-06 17:00,2014-03-22 07:00,2014-04-06 17:00,,PT_Normal,,,,,i56wT9ngRAWnRWPU/nF52g,sMzzmi0fRz6dJbORhn/m8g,,,Y,0,0,,,2014-02-17 15:27,2014-03-01 14:49,admin,admin,
1580,128378,6764,35427,6640,0,N,N,N,CP_Drtn,TT_Task,DT_FixedDrtn,TK_NotStart,HHI.1042,Erect & Tack Shell Course # 2 & Install Stagging Brackets,,0,0,10,0,272,272,10,32,0,32,,,,2014-03-22 07:00,2014-03-22 17:00,,2014-03-22 07:00,2014-03-22 17:00,2014-03-22 07:00,2014-03-22 17:00,2014-03-22 07:00,2014-03-22 17:00,2014-03-22 07:00,2014-03-22 17:00,,PT_Normal,,,,,N6+3ambpQNGgLM666sBEwQ,qnNfoX3NRpal3qf8f6i3gg,,,Y,0,0,,,2014-02-17 15:27,2014-03-01 14:49,admin,admin,
1581,128379,6764,35427,6640,0,N,N,N,CP_Drtn,TT_Task,DT_FixedDrtn,TK_NotStart,HHI.1051,Weld Bottom Sketch Plates to Annular Plate,,0,0,20,0,0,0,20,0,0,0,,,,2014-04-05 07:00,2014-04-06 17:00,,2014-04-05 07:00,2014-04-06 17:00,2014-04-05 07:00,2014-04-06 17:00,2014-04-05 07:00,2014-04-06 17:00,2014-04-05 07:00,2014-04-06 17:00,,PT_Normal,,,,,qP2vw5iPSJuLkezZAU4Hmg,JwH6padSlEeKXthXTKa7lw,,,Y,0,0,,,2014-02-17 15:27,2014-03-01 14:49,admin,admin,
1582,128380,6764,35430,6640,0,N,N,N,CP_Drtn,TT_Task,DT_FixedDrtn,TK_NotStart,HHI.1237,Weld & Align Roof Columns,,700,0,20,0,0,0,20,0,0,0,,,,2014-12-25 16:00,2014-12-28 16:00,,2014-10-02 16:00,2014-10-07 16:00,2014-10-02 16:00,2014-10-07 16:00,2014-10-02 16:00,2014-10-07 16:00,2014-12-25 16:00,2014-12-28 16:00,,PT_Normal,,,,,IAbOZTjXTLKm0ASpjbu+fA,H9pBXegBlUS3bdBgRTnGUw,,,N,0,0,,,2014-02-17 15:27,2014-03-01 17:08,admin,admin,
1583,128381,6764,35431,6640,0,N,N,N,CP_Drtn,TT_Task,DT_FixedDrtn,TK_NotStart,HHI.1238,Weld & Align Roof Columns,,510,0,20,0,0,0,20,0,0,0,,,,2014-12-27 16:00,2014-12-29 16:00,,2014-10-28 16:00,2014-10-30 16:00,2014-10-28 16:00,2014-10-30 16:00,2014-10-28 16:00,2014-10-30 16:00,2014-12-27 16:00,2014-12-29 16:00,,PT_Normal,,,,,InqhyLfrRwy3cooCq5Zc0g,NaFk4IMqZkas5L0N+Zk43w,,,N,0,0,,,2014-02-17 15:27,2014-03-01 17:08,admin,admin,
1584,128382,6764,35433,6640,0,N,N,N,CP_Drtn,TT_Task,DT_FixedDrtn,TK_NotStart,HHI.1242,Perform Roof Surface Preparation & Painting,,730,0,30,0,288,288,30,96,0,96,,,,2015-01-04 16:00,2015-01-07 16:00,,2014-10-11 16:00,2014-10-14 16:00,2014-10-11 16:00,2014-10-14 16:00,2014-10-11 16:00,2014-10-14 16:00,2015-01-04 16:00,2015-01-07 16:00,,PT_Normal,,,,,wZKWqVwPQWGV4Q13V5Inbw,8lIQEszWTWyhHn1H9K2pZA,,,N,0,0,,,2014-02-17 15:27,2014-03-01 17:08,admin,admin,
1585,128383,6764,35433,6640,0,N,N,N,CP_Drtn,TT_Task,DT_FixedDrtn,TK_NotStart,HHI.1241,Perform Shell Surface Preparation & Painting,,700,0,40,0,280,280,40,80,0,80,,,,2014-12-27 16:00,2014-12-31 16:00,,2014-10-06 16:00,2014-10-11 16:00,2014-10-06 16:00,2014-10-11 16:00,2014-10-06 16:00,2014-10-11 16:00,2014-12-27 16:00,2014-12-31 16:00,,PT_Normal,,,,,oAs8IH3nQNqfnSNprKxSEg,eCUXkM9PQRmsxXomxbZ0mg,,,N,0,0,,,2014-02-17 15:27,2014-03-01 17:08,admin,admin,
1586,128384,6764,35433,6640,0,N,N,N,CP_Drtn,TT_Task,DT_FixedDrtn,TK_NotStart,HHI.1243,Quailty Check,,730,30,70,0,285.48,285.48,70,351.36,0,351.36,,,,2014-12-30 16:00,2015-01-07 16:00,,2014-10-06 16:00,2014-10-14 16:00,2014-10-06 16:00,2014-10-14 16:00,2014-10-06 16:00,2014-10-14 16:00,2014-12-30 16:00,2015-01-07 16:00,,PT_Normal,,,,,wnsrm4WFRXie0qOH4Glb2w,tTvusFLqTSaxDR/HdpCHWQ,,,N,0,0,,,2014-02-17 15:27,2014-03-01 17:08,admin,admin,
1587,128385,6764,35434,6640,0,N,N,N,CP_Drtn,TT_Task,DT_FixedDrtn,TK_NotStart,HHI.1249,Quailty Check (including Holiday Test),,700,0,230,0,103.009524,103.009524,230,515.04762,0,515.04762,,,,2015-01-07 16:00,2015-02-03 16:00,,2014-10-18 16:00,2014-11-13 16:00,2014-10-18 16:00,2014-11-13 16:00,2014-10-18 16:00,2014-11-13 16:00,2015-01-07 16:00,2015-02-03 16:00,,PT_Normal,,,,,1GPBkw/RRca5wDJ0B2W7Cg,/Ya8wZ1IT4O2Y54v95J7OQ,,,N,0,0,,,2014-02-17 15:27,2014-03-01 17:08,admin,admin,
1588,128386,6764,35434,6640,0,N,N,N,CP_Drtn,TT_Task,DT_FixedDrtn,TK_NotStart,HHI.1245,Perform Roof Underside Surface Preparation & Painting,,700,0,60,0,1133.104762,1133.104762,60,206.019048,0,206.019048,,,,2015-01-07 16:00,2015-01-14 16:00,,2014-10-18 16:00,2014-10-25 16:00,2014-10-18 16:00,2014-10-25 16:00,2014-10-18 16:00,2014-10-25 16:00,2015-01-07 16:00,2015-01-14 16:00,,PT_Normal,,,,,GLP/I3InSVOLYIYFDXTTWg,+xvbCV90TziEY0xSVIWBcA,,,N,0,0,,,2014-02-17 15:27,2014-03-01 17:08,admin,admin,
1589,128387,6764,35434,6640,0,N,N,N,CP_Drtn,TT_Task,DT_FixedDrtn,TK_NotStart,HHI.1248,Perform Bottom Surface Preparation & Painting,,710,10,30,0,0,0,30,0,0,0,,,,2015-01-31 16:00,2015-02-03 16:00,,2014-11-09 16:00,2014-11-12 16:00,2014-11-09 16:00,2014-11-12 16:00,2014-11-09 16:00,2014-11-12 16:00,2015-01-31 16:00,2015-02-03 16:00,,PT_Normal,,,,,PJGo3I74SS+k2wm0gq2dFQ,gvs+9YRw8k2SvcG5xAtYLQ,,,N,0,0,,,2014-02-17 15:27,2014-03-01 17:08,admin,admin,
1590,128388,6764,35434,6640,0,N,N,N,CP_Drtn,TT_Task,DT_FixedDrtn,TK_NotStart,HHI.1246,Perform Shell course Surface Preparation & Painting,,710,0,80,0,0,0,80,0,0,0,,,,2015-01-15 16:00,2015-01-25 16:00,,2014-10-25 16:00,2014-11-03 16:00,2014-10-25 16:00,2014-11-03 16:00,2014-10-25 16:00,2014-11-03 16:00,2015-01-15 16:00,2015-01-25 16:00,,PT_Normal,,,,,tMmU1gAURX+oNEYCdAFqQg,ijZ1dp/tK0eZ20D+JBP09g,,,N,0,0,,,2014-02-17 15:27,2014-03-01 17:08,admin,admin,
1591,128389,6764,35434,6640,0,N,N,N,CP_Drtn,TT_Task,DT_FixedDrtn,TK_NotStart,HHI.1244,Install Scaffoldings,,700,0,100,0,0,0,100,0,0,0,,,,2014-12-27 16:00,2015-01-07 16:00,,2014-10-06 16:00,2014-10-18 16:00,2014-10-06 16:00,2014-10-18 16:00,2014-10-06 16:00,2014-10-18 16:00,2014-12-27 16:00,2015-01-07 16:00,,PT_Normal,,,,,QGUF+T0rSQa00yCiIcC0Xg,vJCOT90M0UeGfdwvgVjfFw,,,N,0,0,,,2014-02-17 15:27,2014-03-01 17:08,admin,admin,
1592,128390,6764,35434,6640,0,N,N,N,CP_Drtn,TT_Task,DT_FixedDrtn,TK_NotStart,HHI.1247,Dismantle Scaffoldings,,710,0,50,0,0,0,50,0,0,0,,,,2015-01-25 16:00,2015-01-31 16:00,,2014-11-03 16:00,2014-11-09 16:00,2014-11-03 16:00,2014-11-09 16:00,2014-11-03 16:00,2014-11-09 16:00,2015-01-25 16:00,2015-01-31 16:00,,PT_Normal,,,,,1iaQZZrIQqGso9jI8hNbLA,pUaLsMhLi0SY/WVus7Cl3A,,,N,0,0,,,2014-02-17 15:27,2014-03-01 17:08,admin,admin,
1593,128391,6764,35436,6640,0,N,N,N,CP_Drtn,TT_Task,DT_FixedDrtn,TK_NotStart,HHI.1251,Perform Roof Surface Preparation & Painting,,540,0,30,0,288,288,30,96,0,96,,,,2015-01-05 16:00,2015-01-08 16:00,,2014-11-03 16:00,2014-11-06 16:00,2014-11-03 16:00,2014-11-06 16:00,2014-11-03 16:00,2014-11-06 16:00,2015-01-05 16:00,2015-01-08 16:00,,PT_Normal,,,,,bOLFudKwQoS6yzQoOt9fpg,4RuWHVbXUkusNiar7PKZLw,,,N,0,0,,,2014-02-17 15:27,2014-03-01 17:08,admin,admin,
1594,128392,6764,35436,6640,0,N,N,N,CP_Drtn,TT_Task,DT_FixedDrtn,TK_NotStart,HHI.1250,Perform Shell Surface Preparation & Painting,,510,0,40,0,280,280,40,80,0,80,,,,2014-12-28 16:00,2015-01-01 16:00,,2014-10-29 16:00,2014-11-03 16:00,2014-10-29 16:00,2014-11-03 16:00,2014-10-29 16:00,2014-11-03 16:00,2014-12-28 16:00,2015-01-01 16:00,,PT_Normal,,,,,m09Bno4RQhSCf3bF0VLmyw,1+t+51O2e02KpkwKcWaAMw,,,N,0,0,,,2014-02-17 15:27,2014-03-01 17:08,admin,admin,
1595,128393,6764,35436,6640,0,N,N,N,CP_Drtn,TT_Task,DT_FixedDrtn,TK_NotStart,HHI.1252,Quailty Check,,540,30,70,0,285.48,285.48,70,351.36,0,351.36,,,,2014-12-31 16:00,2015-01-08 16:00,,2014-10-29 16:00,2014-11-06 16:00,2014-10-29 16:00,2014-11-06 16:00,2014-10-29 16:00,2014-11-06 16:00,2014-12-31 16:00,2015-01-08 16:00,,PT_Normal,,,,,NSPeUHOCT1uytjXoF0fpzA,FLw20exVo0a3cOO/NUUtNw,,,N,0,0,,,2014-02-17 15:27,2014-03-01 17:08,admin,admin,
1596,128394,6764,35437,6640,0,N,N,N,CP_Drtn,TT_Task,DT_FixedDrtn,TK_NotStart,HHI.1258,Quailty Check (including Holiday Test),,510,0,220,0,103.009524,103.009524,220,515.04762,0,515.04762,,,,2015-01-08 16:00,2015-02-03 16:00,,2014-11-10 16:00,2014-12-06 16:00,2014-11-10 16:00,2014-12-06 16:00,2014-11-10 16:00,2014-12-06 16:00,2015-01-08 16:00,2015-02-03 16:00,,PT_Normal,,,,,OhCkaZgtSryQ5sBJIeOblQ,L0x2I8+2akmDghJAD3ZqSw,,,N,0,0,,,2014-02-17 15:27,2014-03-01 17:08,admin,admin,
1597,128395,6764,35437,6640,0,N,N,N,CP_Drtn,TT_Task,DT_FixedDrtn,TK_NotStart,HHI.1254,Perform Roof Underside Surface Preparation & Painting,,510,0,60,0,1133.104762,1133.104762,60,206.019048,0,206.019048,,,,2015-01-08 16:00,2015-01-15 16:00,,2014-11-10 16:00,2014-11-17 16:00,2014-11-10 16:00,2014-11-17 16:00,2014-11-10 16:00,2014-11-17 16:00,2015-01-08 16:00,2015-01-15 16:00,,PT_Normal,,,,,5q02RWPGRwe2FdXig0Cudw,+iMaYmYo9UKhJtR5xr9Jcw,,,N,0,0,,,2014-02-17 15:27,2014-03-01 17:08,admin,admin,
1598,128396,6764,35437,6640,0,N,N,N,CP_Drtn,TT_Task,DT_FixedDrtn,TK_NotStart,HHI.1257,Perform Bottom Surface Preparation & Painting,,510,0,30,0,0,0,30,0,0,0,,,,2015-01-31 16:00,2015-02-03 16:00,,2014-12-02 16:00,2014-12-06 16:00,2014-12-02 16:00,2014-12-06 16:00,2014-12-02 16:00,2014-12-06 16:00,2015-01-31 16:00,2015-02-03 16:00,,PT_Normal,,,,,Bmu1qjuxTxGy+HgsU+Ac5Q,M+2TEj0FbEmKKcO3Paoi9A,,,N,0,0,,,2014-02-17 15:27,2014-03-01 17:08,admin,admin,
1599,128397,6764,35437,6640,0,N,N,N,CP_Drtn,TT_Task,DT_FixedDrtn,TK_NotStart,HHI.1255,Perform Shell course Surface Preparation & Painting,,510,0,80,0,0,0,80,0,0,0,,,,2015-01-15 16:00,2015-01-25 16:00,,2014-11-17 16:00,2014-11-26 16:00,2014-11-17 16:00,2014-11-26 16:00,2014-11-17 16:00,2014-11-26 16:00,2015-01-15 16:00,2015-01-25 16:00,,PT_Normal,,,,,YJ7JqAXYSZ+X9hp1F+KB0w,Rcq/UYvOz0e31u1WHxYkKg,,,N,0,0,,,2014-02-17 15:27,2014-03-01 17:08,admin,admin,
1600,128398,6764,35437,6640,0,N,N,N,CP_Drtn,TT_Task,DT_FixedDrtn,TK_NotStart,HHI.1253,Install Scaffoldings,,510,0,100,0,0,0,100,0,0,0,,,,2014-12-28 16:00,2015-01-08 16:00,,2014-10-29 16:00,2014-11-10 16:00,2014-10-29 16:00,2014-11-10 16:00,2014-10-29 16:00,2014-11-10 16:00,2014-12-28 16:00,2015-01-08 16:00,,PT_Normal,,,,,NVSNt5vyRIe7cnSChX/txA,UhTg3rTRBkKEK/DxHCsyGg,,,N,0,0,,,2014-02-17 15:27,2014-03-01 17:08,admin,admin,
1601,128399,6764,35437,6640,0,N,N,N,CP_Drtn,TT_Task,DT_FixedDrtn,TK_NotStart,HHI.1256,Dismantle Scaffoldings,,510,0,50,0,0,0,50,0,0,0,,,,2015-01-25 16:00,2015-01-31 16:00,,2014-11-26 16:00,2014-12-02 16:00,2014-11-26 16:00,2014-12-02 16:00,2014-11-26 16:00,2014-12-02 16:00,2015-01-25 16:00,2015-01-31 16:00,,PT_Normal,,,,,ln3JpNVTR36LdnTKFj8iAg,k+QNvW47+E6UpOHZK+ozgQ,,,N,0,0,,,2014-02-17 15:27,2014-03-01 17:08,admin,admin,
1602,128400,6764,35439,6640,0,N,N,N,CP_Drtn,TT_Task,DT_FixedDrtn,TK_NotStart,HHI.1232,Remove Stagging Blanks/Brackets & Install Blind Flanges,,0,0,20,0,936,936,20,72,0,72,,,,2014-08-28 11:00,2014-08-30 16:00,,2014-08-28 11:00,2014-08-30 16:00,2014-08-28 11:00,2014-08-30 16:00,2014-08-28 11:00,2014-08-30 16:00,2014-08-28 11:00,2014-08-30 16:00,,PT_Normal,,,,,CuQ7+ST1ReWZ/r+9RPOIXQ,vWl4eqaiSKWp4M/kuUyXgg,,,Y,0,0,,,2014-02-17 15:27,2014-03-01 17:03,admin,admin,
1603,128401,6764,35439,6640,0,N,N,N,CP_Drtn,TT_Task,DT_FixedDrtn,TK_NotStart,HHI.1234,Hold & Inspect Water for 24 Hours,,0,0,10,0,34.133333,34.133333,10,85.333334,0,85.333334,,,,2014-10-08 16:00,2014-10-09 16:00,,2014-10-08 16:00,2014-10-09 16:00,2014-10-08 16:00,2014-10-09 16:00,2014-10-08 16:00,2014-10-09 16:00,2014-10-08 16:00,2014-10-09 16:00,,PT_Normal,,,,,KeRLcsXjTASMhPLCM7R8FQ,2SZSf6CpQk2LnwH3I0kFJQ,,,Y,0,0,,,2014-02-17 15:27,2014-03-01 17:03,admin,admin,
1604,128402,6764,35439,6640,0,N,N,N,CP_Drtn,TT_Task,DT_FixedDrtn,TK_NotStart,HHI.1235,Drain Water from Tank & Transfer to Demenarlized Tanks 1&2,,0,0,160,0,80,80,160,85.333334,0,85.333334,,,,2014-10-09 16:00,2014-10-28 16:00,,2014-10-09 16:00,2014-10-28 16:00,2014-10-09 16:00,2014-10-28 16:00,2014-10-09 16:00,2014-10-28 16:00,2014-10-09 16:00,2014-10-28 16:00,,PT_Normal,,,,,5ogSbqTgSmOKyZI3uIg7QQ,MFByrT3eT+Kcbsm3X4czpQ,,,Y,0,0,,,2014-02-17 15:27,2014-03-01 17:03,admin,admin,
1605,128403,6764,35439,6640,0,N,N,N,CP_Drtn,TT_Task,DT_FixedDrtn,TK_NotStart,HHI.1236,"Build Mobile Scaffolding,Internal CLeaning&Dismantling/Quailty Check",,510,0,40,0,25.6,25.6,40,42.666666,0,42.666666,,,,2014-12-27 16:00,2014-12-31 16:00,,2014-10-28 16:00,2014-11-02 16:00,2014-10-28 16:00,2014-11-02 16:00,2014-10-28 16:00,2014-11-02 16:00,2014-12-27 16:00,2014-12-31 16:00,,PT_Normal,,,,,Rga9gBy7RhyyDqdV2mZopQ,uYF4jJBwQrGDVGpQORtbCA,,,N,0,0,,,2014-02-17 15:27,2014-03-01 17:08,admin,admin,
1606,128404,6764,35439,6640,0,N,N,N,CP_Drtn,TT_Task,DT_FixedDrtn,TK_NotStart,HHI.1233,Tank Water Filling/Settlement,,0,0,320,0,0,0,320,0,0,0,,,,2014-08-30 16:00,2014-10-08 16:00,,2014-08-30 16:00,2014-10-08 16:00,2014-08-30 16:00,2014-10-08 16:00,2014-08-30 16:00,2014-10-08 16:00,2014-08-30 16:00,2014-10-08 16:00,,PT_Normal,,,,,+j1V6WgkTDWfVgj07/cxFw,N+BBD8NJm0WFqt/UneVqGg,,,Y,0,0,,,2014-02-17 15:27,2014-03-01 17:03,admin,admin,
1607,128405,6764,35440,6640,0,N,N,N,CP_Drtn,TT_Task,DT_FixedDrtn,TK_NotStart,HHI.1226,Remove Stagging Blanks/Brackets & Install Blind Flanges,,0,0,20,0,105.6,105.6,20,42.666666,0,42.666666,,,,2014-08-03 16:00,2014-08-05 16:00,,2014-08-03 16:00,2014-08-05 16:00,2014-08-03 16:00,2014-08-05 16:00,2014-08-03 16:00,2014-08-05 16:00,2014-08-03 16:00,2014-08-05 16:00,,PT_Normal,,,,,b1dhjZPpSamlNvndPAFH2w,DcCYJu7hRcKOAGx9QRoPtg,,,Y,0,0,,,2014-02-17 15:27,2014-03-01 17:06,admin,admin,
1608,128406,6764,35440,6640,0,N,N,N,CP_Drtn,TT_Task,DT_FixedDrtn,TK_NotStart,HHI.1227,Tank Water Filling & Settlement,,0,0,320,0,1407.999998,1407.999998,320,3002.666666,0,3002.666666,,,,2014-08-05 16:00,2014-09-09 11:00,,2014-08-05 16:00,2014-09-09 11:00,2014-08-05 16:00,2014-09-09 11:00,2014-08-05 16:00,2014-09-09 11:00,2014-08-05 16:00,2014-09-09 11:00,,PT_Normal,,,,,7bbGOt7IRdaxwOTLXy9QZQ,dRaPLcvCT+e1j6dl7prz/g,,,Y,0,0,,,2014-02-17 15:27,2014-03-01 17:06,admin,admin,
1609,128407,6764,35440,6640,0,N,N,N,CP_Drtn,TT_Task,DT_FixedDrtn,TK_NotStart,HHI.1228,Hold & Inspect Water for 24 Hours,,0,0,10,0,128.000001,128.000001,10,85.333333,0,85.333333,,,,2014-09-09 11:00,2014-09-10 11:00,,2014-09-09 11:00,2014-09-10 11:00,2014-09-09 11:00,2014-09-10 11:00,2014-09-09 11:00,2014-09-10 11:00,2014-09-09 11:00,2014-09-10 11:00,,PT_Normal,,,,,jni8YE3IRaiL+bO8IGDS5A,hiLFgg7iSPG97EMcDUYwZw,,,Y,0,0,,,2014-02-17 15:27,2014-03-01 17:06,admin,admin,
1610,128408,6764,35440,6640,0,N,N,N,CP_Drtn,TT_Task,DT_FixedDrtn,TK_NotStart,HHI.1229,Drain Water from Tank & Transfer Desanilated Water Tank #1,,0,0,160,0,420.48,420.48,160,69.12,0,69.12,,,,2014-09-10 11:00,2014-09-29 16:00,,2014-09-10 11:00,2014-09-29 16:00,2014-09-10 11:00,2014-09-29 16:00,2014-09-10 11:00,2014-09-29 16:00,2014-09-10 11:00,2014-09-29 16:00,,PT_Normal,,,,,iWwVfHJ1TCKkSM2ci738Yw,i4hC2p/uR9Coz5h5HDJvPA,,,Y,0,0,,,2014-02-17 15:27,2014-03-01 17:06,admin,admin,
1611,128409,6764,35440,6640,0,N,N,N,CP_Drtn,TT_Task,DT_FixedDrtn,TK_NotStart,HHI.1230,"Build Mobile Scaffolding,Internal CLeaning&Dismantling",,700,0,30,0,73.200001,73.200001,30,85.333334,0,85.333334,,,,2014-12-22 16:00,2014-12-25 16:00,,2014-09-29 16:00,2014-10-02 16:00,2014-09-29 16:00,2014-10-02 16:00,2014-09-29 16:00,2014-10-02 16:00,2014-12-22 16:00,2014-12-25 16:00,,PT_Normal,,,,,OT8yWWeAQCCqyc58KG4bHg,H2vxfraRTZKV7M0+x2QsQw,,,N,0,0,,,2014-02-17 15:27,2014-03-01 17:08,admin,admin,
1612,128410,6764,35440,6640,0,N,N,N,CP_Drtn,TT_Task,DT_FixedDrtn,TK_NotStart,HHI.1231,Quailty Check,,700,0,10,0,50.666666,50.666666,10,42.666667,0,42.666667,,,,2014-12-25 16:00,2014-12-27 16:00,,2014-10-02 16:00,2014-10-06 16:00,2014-10-02 16:00,2014-10-06 16:00,2014-10-02 16:00,2014-10-06 16:00,2014-12-25 16:00,2014-12-27 16:00,,PT_Normal,,,,,j97YZ4jwRxS5BASMVi874w,mn4MjdzbSCqgzv5+1Q5APg,,,N,0,0,,,2014-02-17 15:27,2014-03-01 17:08,admin,admin,
1613,128411,6764,35442,6640,0,N,N,N,CP_Drtn,TT_Task,DT_FixedDrtn,TK_NotStart,JF752.1259,"Install Valves,instruments & Internal Cathodic System (Supplied by client)",,700,0,10,0,0,0,10,0,0,0,,,,2015-02-03 16:00,2015-02-04 16:00,,2014-11-13 16:00,2014-11-15 16:00,2014-11-13 16:00,2014-11-15 16:00,2014-11-13 16:00,2014-11-15 16:00,2015-02-03 16:00,2015-02-04 16:00,,PT_Normal,,,,,1hlEe7h3T9Kh2kqLceQonw,,,,N,0,0,,,2014-02-17 15:27,2014-03-01 17:08,admin,admin,
1614,128412,6764,35443,6640,0,N,N,N,CP_Drtn,TT_Task,DT_FixedDrtn,TK_NotStart,JF752.1260,"Install Valves,instruments & Internal Cathodic System (Supplied by client)",,510,0,10,0,0,0,10,0,0,0,,,,2015-02-03 16:00,2015-02-04 16:00,,2014-12-06 16:00,2014-12-07 16:00,2014-12-06 16:00,2014-12-07 16:00,2014-12-06 16:00,2014-12-07 16:00,2015-02-03 16:00,2015-02-04 16:00,,PT_Normal,,,,,JdMOsGsaTROREMRU9EvVJQ,,,,N,0,0,,,2014-02-17 15:27,2014-03-01 17:08,admin,admin,
1615,128413,6764,35445,6640,0,N,N,N,CP_Drtn,TT_Task,DT_FixedDrtn,TK_NotStart,HHI.1239,"Fit,Weld Name Plate brackets/Attachments on shell Course #1",,700,0,10,0,17.066666,17.066666,10,42.666666,0,42.666666,,,,2014-12-25 16:00,2014-12-27 16:00,,2014-10-02 16:00,2014-10-06 16:00,2014-10-02 16:00,2014-10-06 16:00,2014-10-02 16:00,2014-10-06 16:00,2014-12-25 16:00,2014-12-27 16:00,,PT_Normal,,,,,xXAx5o2rRjyo6y2wGxx8XQ,7KgCTbdEQcWybHmN9O12Nw,,,N,0,0,,,2014-02-17 15:27,2014-03-01 17:08,admin,admin,
1616,128414,6764,35446,6640,0,N,N,N,CP_Drtn,TT_Task,DT_FixedDrtn,TK_NotStart,HHI.1240,"Fit,Weld Name Plate brackets/Attachments on shell Course #1",,510,0,10,0,51.199998,51.199998,10,42.666667,0,42.666667,,,,2014-12-27 16:00,2014-12-28 16:00,,2014-10-28 16:00,2014-10-29 16:00,2014-10-28 16:00,2014-10-29 16:00,2014-10-28 16:00,2014-10-29 16:00,2014-12-27 16:00,2014-12-28 16:00,,PT_Normal,,,,,Vdr3TCWcTB23VMPoTxEiww,RyAcnkzBSiCgtUPgUgFCyQ,,,N,0,0,,,2014-02-17 15:27,2014-03-01 17:08,admin,admin,
1617,128415,6764,35447,6640,0,N,N,N,CP_Drtn,TT_Mile,DT_FixedDrtn,TK_NotStart,HHI.1000,HHI Hand over Tank#1(10GHE11BB001) Foundation  to AZ,,0,0,0,0,0,0,0,0,0,0,2014-02-18 07:00,,,2014-02-18 07:00,2014-02-18 07:00,,2014-02-18 07:00,2014-02-18 07:00,2014-02-18 07:00,2014-02-18 07:00,2014-02-18 07:00,2014-02-18 07:00,2014-02-18 07:00,2014-02-18 07:00,CS_MSO,PT_Normal,,,,,i15iZod9Q7S7wuyVT9y+KQ,jZBqjg4eR2uWUdRphzKneQ,,,Y,0,0,,,2014-02-17 15:27,2014-03-01 14:49,admin,admin,
1618,128416,6764,35447,6640,0,N,N,N,CP_Drtn,TT_Task,DT_FixedDrtn,TK_NotStart,HHI.1001,AZ Check Tank#1 Foundation Levelness prior to Mechanical Works,,0,0,10,0,0,0,10,0,0,0,,,,2014-02-18 07:00,2014-02-18 17:00,,2014-02-18 07:00,2014-02-18 17:00,2014-02-18 07:00,2014-02-18 17:00,2014-02-18 07:00,2014-02-18 17:00,2014-02-18 07:00,2014-02-18 17:00,,PT_Normal,,,,,v1Kc84HQSQSPymjDqkbNEA,0G+Ov/CT2EyBqY3FlGkIDA,,,Y,0,0,,,2014-02-17 15:27,2014-03-01 14:49,admin,admin,
1619,128417,6764,35447,6640,0,N,N,N,CP_Drtn,TT_Mile,DT_FixedDrtn,TK_NotStart,HHI.1002,HHI Hand over Tank#2(10GHE12BB001) Foundation to AZ,,60,0,0,0,0,0,0,0,0,0,,,,2014-02-25 07:00,2014-02-25 07:00,,2014-02-18 07:00,2014-02-18 07:00,2014-02-18 07:00,2014-02-18 07:00,2014-02-18 07:00,2014-02-18 07:00,2014-02-25 07:00,2014-02-25 07:00,,PT_Normal,,,,,PcJ7JxD3RpGC5RhOqyEMzw,H8I32A1GrE2ki6CPmHjPpw,,,N,0,0,,,2014-02-17 15:27,2014-03-01 14:49,admin,admin,
1620,128418,6764,35447,6640,0,N,N,N,CP_Drtn,TT_Task,DT_FixedDrtn,TK_NotStart,HHI.1003,AZ Check Tank#2 Foundation Levelness prior to Mechanical Works,,60,60,10,0,0,0,10,0,0,0,,,,2014-02-25 07:00,2014-02-25 17:00,,2014-02-18 07:00,2014-02-18 17:00,2014-02-18 07:00,2014-02-18 17:00,2014-02-18 07:00,2014-02-18 17:00,2014-02-25 07:00,2014-02-25 17:00,,PT_Normal,,,,,PNORLYj/QKe0qgmTDQVPCw,3hHp6m+gf0+yLrof6ytyfA,,,N,0,0,,,2014-02-17 15:27,2014-03-01 14:49,admin,admin,
1621,128419,6764,35449,6640,0,N,N,N,CP_Drtn,TT_Task,DT_FixedDrtn,TK_NotStart,HHI.1262,Perform Final Inspection & Handover to CLient,,510,510,10,0,0,0,10,0,0,0,,,,2015-02-04 16:00,2015-02-05 16:00,,2014-12-07 16:00,2014-12-08 16:00,2014-12-07 16:00,2014-12-08 16:00,2014-12-07 16:00,2014-12-08 16:00,2015-02-04 16:00,2015-02-05 16:00,,PT_Normal,,,,,aHSj/2MBQAOibCh2yp3V7w,WTan5zwzOkKJirLrh1F4Eg,,,N,0,0,,,2014-02-17 15:27,2014-03-01 17:08,admin,admin,
1622,128420,6764,35450,6640,0,N,N,N,CP_Drtn,TT_Task,DT_FixedDrtn,TK_NotStart,HHI.1261,Perform Final Inspection & Handover to CLient,,700,700,10,0,0,0,10,0,0,0,,,,2015-02-04 16:00,2015-02-05 16:00,,2014-11-15 16:00,2014-11-16 16:00,2014-11-15 16:00,2014-11-16 16:00,2014-11-15 16:00,2014-11-16 16:00,2015-02-04 16:00,2015-02-05 16:00,,PT_Normal,,,,,kM/RG/AqS3iVR4s7SgVgYg,SxrzYUiGSE62pBonO0Fv3A,,,N,0,0,,,2014-02-17 15:27,2014-03-01 17:08,admin,admin,
1623,128421,6764,35453,6640,0,N,N,N,CP_Drtn,TT_Mile,DT_FixedDrtn,TK_NotStart,HHI.3001,HHI Hand over Tank (10LDP10BB001) Foundation  to AZ,,0,0,0,0,0,0,0,0,0,0,2014-04-03 07:00,,,2014-04-03 07:00,2014-04-03 07:00,,2014-04-03 07:00,2014-04-03 07:00,2014-04-03 07:00,2014-04-03 07:00,2014-04-03 07:00,2014-04-03 07:00,2014-04-03 07:00,2014-04-03 07:00,CS_MSO,PT_Normal,,,,,hs0o6Ob8TZ2SfzbnXi0Rqw,jZBqjg4eR2uWUdRphzKneQ,,,N,0,0,,,2014-02-17 15:27,2014-03-01 15:26,admin,admin,
1624,128422,6764,35453,6640,0,N,N,N,CP_Drtn,TT_Task,DT_FixedDrtn,TK_NotStart,HHI.3002,AZ Check Tank Foundation Levelness prior to Mechanical Works,,1630,0,10,0,0,0,10,0,0,0,,,,2014-10-23 16:00,2014-10-25 16:00,,2014-04-03 07:00,2014-04-03 17:00,2014-04-03 07:00,2014-04-03 17:00,2014-04-03 07:00,2014-04-03 17:00,2014-10-23 16:00,2014-10-25 16:00,,PT_Normal,,,,,bGMppzqtTLWMMP66esxGcw,0G+Ov/CT2EyBqY3FlGkIDA,,,N,0,0,,,2014-02-17 15:27,2014-03-01 17:08,admin,admin,
1625,128423,6764,35455,6640,0,N,N,N,CP_Drtn,TT_Task,DT_FixedDrtn,TK_NotStart,HHI.3085,Remove Stagging Blanks/Brackets & Install Blind Flanges,,1630,0,10,0,105.6,105.6,10,42.666666,0,42.666666,,,,2014-12-28 16:00,2014-12-29 16:00,,2014-06-08 07:00,2014-06-08 17:00,2014-06-08 07:00,2014-06-08 17:00,2014-06-08 07:00,2014-06-08 17:00,2014-12-28 16:00,2014-12-29 16:00,,PT_Normal,,,,,AzhOTw73Styv6wVpYmTbJg,DcCYJu7hRcKOAGx9QRoPtg,,,N,0,0,,,2014-02-17 15:27,2014-03-01 17:08,admin,admin,
1626,128424,6764,35455,6640,0,N,N,N,CP_Drtn,TT_Task,DT_FixedDrtn,TK_NotStart,HHI.3086,Tank Water Filling & Settlement,,1630,0,60,0,1407.999998,1407.999998,60,3002.666666,0,3002.666666,,,,2014-12-29 16:00,2015-01-05 16:00,,2014-06-09 07:00,2014-06-15 17:00,2014-06-09 07:00,2014-06-15 17:00,2014-06-09 07:00,2014-06-15 17:00,2014-12-29 16:00,2015-01-05 16:00,,PT_Normal,,,,,QfvMpkmZSCeEO9JMy0rN7w,dRaPLcvCT+e1j6dl7prz/g,,,N,0,0,,,2014-02-17 15:27,2014-03-01 17:08,admin,admin,
1627,128425,6764,35455,6640,0,N,N,N,CP_Drtn,TT_Task,DT_FixedDrtn,TK_NotStart,HHI.3087,Hold & Inspect Water for 24 Hours,,1630,0,10,0,128.000001,128.000001,10,85.333333,0,85.333333,,,,2015-01-05 16:00,2015-01-06 16:00,,2014-06-16 07:00,2014-06-16 17:00,2014-06-16 07:00,2014-06-16 17:00,2014-06-16 07:00,2014-06-16 17:00,2015-01-05 16:00,2015-01-06 16:00,,PT_Normal,,,,,xoKTGhXeSyqH4fQ23YFAEg,hiLFgg7iSPG97EMcDUYwZw,,,N,0,0,,,2014-02-17 15:27,2014-03-01 17:08,admin,admin,
1628,128426,6764,35455,6640,0,N,N,N,CP_Drtn,TT_Task,DT_FixedDrtn,TK_NotStart,HHI.3088,Drain Water from Tank & Transfer to other Tank,,1630,0,30,0,420.48,420.48,30,69.12,0,69.12,,,,2015-01-06 16:00,2015-01-10 16:00,,2014-06-17 07:00,2014-06-19 17:00,2014-06-17 07:00,2014-06-19 17:00,2014-06-17 07:00,2014-06-19 17:00,2015-01-06 16:00,2015-01-10 16:00,,PT_Normal,,,,,RcVu4U4PSaGAdwd5lpd4ww,i4hC2p/uR9Coz5h5HDJvPA,,,N,0,0,,,2014-02-17 15:27,2014-03-01 17:08,admin,admin,
1629,128427,6764,35455,6640,0,N,N,N,CP_Drtn,TT_Task,DT_FixedDrtn,TK_NotStart,HHI.3090,Quailty Check,,1630,0,10,0,50.666666,50.666666,10,42.666667,0,42.666667,,,,2015-01-13 16:00,2015-01-14 16:00,,2014-06-24 07:00,2014-06-24 17:00,2014-06-24 07:00,2014-06-24 17:00,2014-06-24 07:00,2014-06-24 17:00,2015-01-13 16:00,2015-01-14 16:00,,PT_Normal,,,,,EJtCS5IxSYGUKca75ur0Qg,mn4MjdzbSCqgzv5+1Q5APg,,,N,0,0,,,2014-02-17 15:27,2014-03-01 17:08,admin,admin,
1630,128428,6764,35455,6640,0,N,N,N,CP_Drtn,TT_Task,DT_FixedDrtn,TK_NotStart,HHI.3089,"Install Mobile Scaffolding ,Internal Tank Cleaning & Dismantling Scaffolding",,1630,0,30,0,73.200001,73.200001,30,85.333334,0,85.333334,,,,2015-01-10 16:00,2015-01-13 16:00,,2014-06-21 07:00,2014-06-23 17:00,2014-06-21 07:00,2014-06-23 17:00,2014-06-21 07:00,2014-06-23 17:00,2015-01-10 16:00,2015-01-13 16:00,,PT_Normal,,,,,Xq+e8Y0cSeOnu64LKBpB3Q,H2vxfraRTZKV7M0+x2QsQw,,,N,0,0,,,2014-02-17 15:27,2014-03-01 17:08,admin,admin,
1631,128429,6764,35456,6640,0,N,N,N,CP_Drtn,TT_Task,DT_FixedDrtn,TK_NotStart,HHI.3093,Perform Roof Surface Preparation & Painting,,1630,0,20,0,288,288,20,96,0,96,,,,2015-01-19 16:00,2015-01-21 16:00,,2014-07-01 11:00,2014-07-05 13:00,2014-07-01 11:00,2014-07-05 13:00,2014-07-01 11:00,2014-07-05 13:00,2015-01-19 16:00,2015-01-21 16:00,,PT_Normal,,,,,rLJBi8OvQ/6IfQSFRWzOCw,8lIQEszWTWyhHn1H9K2pZA,,,N,0,0,,,2014-02-17 15:27,2014-03-01 17:08,admin,admin,
1632,128430,6764,35456,6640,0,N,N,N,CP_Drtn,TT_Task,DT_FixedDrtn,TK_NotStart,HHI.3092,Perform Shell Surface Preparation & Painting,,1630,0,20,0,280,280,20,80,0,80,,,,2015-01-17 16:00,2015-01-19 16:00,,2014-06-28 09:00,2014-07-01 11:00,2014-06-28 09:00,2014-07-01 11:00,2014-06-28 09:00,2014-07-01 11:00,2015-01-17 16:00,2015-01-19 16:00,,PT_Normal,,,,,DdmVCr0NQL+xdyky24Udww,eCUXkM9PQRmsxXomxbZ0mg,,,N,0,0,,,2014-02-17 15:27,2014-03-01 17:08,admin,admin,
1633,128431,6764,35456,6640,0,N,N,N,CP_Drtn,TT_Task,DT_FixedDrtn,TK_NotStart,HHI.3094,Quailty Check,,1630,0,40,0,285.48,285.48,40,351.36,0,351.36,,,,2015-01-17 16:00,2015-01-21 16:00,,2014-06-28 09:00,2014-07-05 13:00,2014-06-28 09:00,2014-07-05 13:00,2014-06-28 09:00,2014-07-05 13:00,2015-01-17 16:00,2015-01-21 16:00,,PT_Normal,,,,,5aLbR4WxTTGawj+G5n6VOw,tTvusFLqTSaxDR/HdpCHWQ,,,N,0,0,,,2014-02-17 15:27,2014-03-01 17:08,admin,admin,
1634,128432,6764,35457,6640,0,N,N,N,CP_Drtn,TT_Task,DT_FixedDrtn,TK_NotStart,HHI.3100,Quailty Check (including Holiday Test),,1630,0,110,0,103.009524,103.009524,110,515.04762,0,515.04762,,,,2015-01-21 16:00,2015-02-03 16:00,,2014-07-05 13:00,2014-07-26 15:00,2014-07-05 13:00,2014-07-26 15:00,2014-07-05 13:00,2014-07-26 15:00,2015-01-21 16:00,2015-02-03 16:00,,PT_Normal,,,,,EbUvIfAJQB2EeRnro+Xxrw,/Ya8wZ1IT4O2Y54v95J7OQ,,,N,0,0,,,2014-02-17 15:27,2014-03-01 17:08,admin,admin,
1635,128433,6764,35457,6640,0,N,N,N,CP_Drtn,TT_Task,DT_FixedDrtn,TK_NotStart,HHI.3096,Perform Roof Underside Surface Preparation & Painting,,1630,0,30,0,1133.104762,1133.104762,30,206.019048,0,206.019048,,,,2015-01-21 16:00,2015-01-25 16:00,,2014-07-05 13:00,2014-07-10 13:00,2014-07-05 13:00,2014-07-10 13:00,2014-07-05 13:00,2014-07-10 13:00,2015-01-21 16:00,2015-01-25 16:00,,PT_Normal,,,,,eoHYJysQREauIN7kicNxLA,+xvbCV90TziEY0xSVIWBcA,,,N,0,0,,,2014-02-17 15:27,2014-03-01 17:08,admin,admin,
1636,128434,6764,35457,6640,0,N,N,N,CP_Drtn,TT_Task,DT_FixedDrtn,TK_NotStart,HHI.3099,Perform Bottom Surface Preparation & Painting,,1630,0,30,0,0,0,30,0,0,0,,,,2015-01-31 16:00,2015-02-03 16:00,,2014-07-21 09:00,2014-07-26 15:00,2014-07-21 09:00,2014-07-26 15:00,2014-07-21 09:00,2014-07-26 15:00,2015-01-31 16:00,2015-02-03 16:00,,PT_Normal,,,,,xZq44PWnQcWHbj7RS77oxg,gvs+9YRw8k2SvcG5xAtYLQ,,,N,0,0,,,2014-02-17 15:27,2014-03-01 17:08,admin,admin,
1637,128435,6764,35457,6640,0,N,N,N,CP_Drtn,TT_Task,DT_FixedDrtn,TK_NotStart,HHI.3097,Perform Shell course Surface Preparation & Painting,,1630,0,20,0,0,0,20,0,0,0,,,,2015-01-25 16:00,2015-01-27 16:00,,2014-07-10 13:00,2014-07-14 15:00,2014-07-10 13:00,2014-07-14 15:00,2014-07-10 13:00,2014-07-14 15:00,2015-01-25 16:00,2015-01-27 16:00,,PT_Normal,,,,,Enc2m2b/RICuLcOptRELOw,ijZ1dp/tK0eZ20D+JBP09g,,,N,0,0,,,2014-02-17 15:27,2014-03-01 17:08,admin,admin,
1638,128436,6764,35457,6640,0,N,N,N,CP_Drtn,TT_Task,DT_FixedDrtn,TK_NotStart,HHI.3095,Install Scaffoldings,,1640,10,30,0,0,0,30,0,0,0,,,,2015-01-18 16:00,2015-01-21 16:00,,2014-06-28 09:00,2014-07-02 15:00,2014-06-28 09:00,2014-07-02 15:00,2014-06-28 09:00,2014-07-02 15:00,2015-01-18 16:00,2015-01-21 16:00,,PT_Normal,,,,,eofHVls1TT6e1MeLjqn5og,vJCOT90M0UeGfdwvgVjfFw,,,N,0,0,,,2014-02-17 15:27,2014-03-01 17:08,admin,admin,
1639,128437,6764,35457,6640,0,N,N,N,CP_Drtn,TT_Task,DT_FixedDrtn,TK_NotStart,HHI.3098,Dismantle Scaffoldings,,1630,0,30,0,0,0,30,0,0,0,,,,2015-01-27 16:00,2015-01-31 16:00,,2014-07-15 09:00,2014-07-20 15:00,2014-07-15 09:00,2014-07-20 15:00,2014-07-15 09:00,2014-07-20 15:00,2015-01-27 16:00,2015-01-31 16:00,,PT_Normal,,,,,8boK6i1+S4uaOhJeWR2KzA,pUaLsMhLi0SY/WVus7Cl3A,,,N,0,0,,,2014-02-17 15:27,2014-03-01 17:08,admin,admin,
1640,128438,6764,35458,6640,0,N,N,N,CP_Drtn,TT_Task,DT_FixedDrtn,TK_NotStart,HHI.3091,Install Name Plate Brackets/Attachments on shell Course #1 & Anchor Bolts,,1630,0,20,0,17.066666,17.066666,20,42.666666,0,42.666666,,,,2015-01-14 16:00,2015-01-17 16:00,,2014-06-25 07:00,2014-06-26 17:00,2014-06-25 07:00,2014-06-26 17:00,2014-06-25 07:00,2014-06-26 17:00,2015-01-14 16:00,2015-01-17 16:00,,PT_Normal,,,,,QoThZRUsQWqiAQby8Yumjg,7KgCTbdEQcWybHmN9O12Nw,,,N,0,0,,,2014-02-17 15:27,2014-03-01 17:08,admin,admin,
1641,128439,6764,35459,6640,0,N,N,N,CP_Drtn,TT_Task,DT_FixedDrtn,TK_NotStart,JF752.3101,"Install Valves,instruments (Supplied by client)",,1630,0,10,0,0,0,10,0,0,0,,,,2015-02-03 16:00,2015-02-04 16:00,,2014-07-27 09:00,2014-07-30 11:00,2014-07-27 09:00,2014-07-30 11:00,2014-07-27 09:00,2014-07-30 11:00,2015-02-03 16:00,2015-02-04 16:00,,PT_Normal,,,,,2k7AzeXoRYq/MVO7iaGmFQ,giIQjAu3wE6VDgXXy5IQtA,,,N,0,0,,,2014-02-17 15:27,2014-03-01 17:08,admin,admin,
1642,128440,6764,35461,6640,0,N,N,N,CP_Drtn,TT_Task,DT_FixedDrtn,TK_NotStart,HHI.3015,Erect & Tack Shell Course # 1 & Install Stagging Brackets,,1630,0,20,0,420,420,20,48,0,48,,,,2014-11-02 16:00,2014-11-04 16:00,,2014-04-13 07:00,2014-04-14 17:00,2014-04-13 07:00,2014-04-14 17:00,2014-04-13 07:00,2014-04-14 17:00,2014-11-02 16:00,2014-11-04 16:00,,PT_Normal,,,,,Pn3wIWqgRciUQXOop4z/HA,s5zhiuSATeqG2jTLPTEhQw,,,N,0,0,,,2014-02-17 15:27,2014-03-01 17:08,admin,admin,
1643,128441,6764,35461,6640,0,N,N,N,CP_Drtn,TT_Task,DT_FixedDrtn,TK_NotStart,HHI.3017,Weld Outer Vertical Seam / Install the Stairways support on Shell,,1640,0,10,0,400,400,10,80,0,80,,,,2014-11-04 16:00,2014-11-05 16:00,,2014-04-14 07:00,2014-04-14 17:00,2014-04-14 07:00,2014-04-14 17:00,2014-04-14 07:00,2014-04-14 17:00,2014-11-04 16:00,2014-11-05 16:00,,PT_Normal,,,,,v2RvtOf/Q4+RUjZr66TEoA,pHTagyh0QIuA0TUp0IGvhg,,,N,0,0,,,2014-02-17 15:27,2014-03-01 17:08,admin,admin,
1644,128442,6764,35461,6640,0,N,N,N,CP_Drtn,TT_Task,DT_FixedDrtn,TK_NotStart,HHI.3018,"Backgouge,Grinding & NDT Inside Vertical Seam",,1640,0,10,0,90,90,10,33.066667,0,33.066667,,,,2014-11-04 16:00,2014-11-05 16:00,,2014-04-14 07:00,2014-04-14 17:00,2014-04-14 07:00,2014-04-14 17:00,2014-04-14 07:00,2014-04-14 17:00,2014-11-04 16:00,2014-11-05 16:00,,PT_Normal,,,,,eY4SMz1iRwWuDQ+QNQVC2Q,gcuvXhrSRhG+jNLyE8ZpdQ,,,N,0,0,,,2014-02-17 15:27,2014-03-01 17:08,admin,admin,
1645,128443,6764,35461,6640,0,N,N,N,CP_Drtn,TT_Task,DT_FixedDrtn,TK_NotStart,HHI.3019,Weld Inside Vertical Seam,,1640,0,10,0,181.333334,181.333334,10,85.333334,0,85.333334,,,,2014-11-05 16:00,2014-11-06 16:00,,2014-04-15 07:00,2014-04-15 17:00,2014-04-15 07:00,2014-04-15 17:00,2014-04-15 07:00,2014-04-15 17:00,2014-11-05 16:00,2014-11-06 16:00,,PT_Normal,,,,,LO8P6a/yQjqOQmhsXWGeEA,xVg/IaTfRimmmOqjCNcvFg,,,N,0,0,,,2014-02-17 15:27,2014-03-01 17:08,admin,admin,
1646,128444,6764,35461,6640,0,N,N,N,CP_Drtn,TT_Task,DT_FixedDrtn,TK_NotStart,HHI.3021,"Quailty Check(Visual Inspection & PT,Air Leak Test for Shell Manholes& Nozzles)",,1630,0,50,0,27.111111,27.111111,50,33.066667,0,33.066667,,,,2014-11-02 16:00,2014-11-08 16:00,,2014-04-13 07:00,2014-04-17 17:00,2014-04-13 07:00,2014-04-17 17:00,2014-04-13 07:00,2014-04-17 17:00,2014-11-02 16:00,2014-11-08 16:00,,PT_Normal,,,,,xaxDFeuOSV213D5PR7EIfw,KfRUdINiRHSPJb3Ee1lgiw,,,N,0,0,,,2014-02-17 15:27,2014-03-01 17:08,admin,admin,
1647,128445,6764,35461,6640,0,N,N,N,CP_Drtn,TT_Task,DT_FixedDrtn,TK_NotStart,HHI.3016,Fit up/Tack Shell #1 to Annular Plate,,1640,0,10,0,0,0,10,0,0,0,,,,2014-11-04 16:00,2014-11-05 16:00,,2014-04-14 07:00,2014-04-14 17:00,2014-04-14 07:00,2014-04-14 17:00,2014-04-14 07:00,2014-04-14 17:00,2014-11-04 16:00,2014-11-05 16:00,,PT_Normal,,,,,FFrN9uYSSbSXtqNHTkNTag,cFX/3TGDH0OaFBWa611yJA,,,N,0,0,,,2014-02-17 15:27,2014-03-01 17:08,admin,admin,
1648,128446,6764,35461,6640,0,N,N,N,CP_Drtn,TT_Task,DT_FixedDrtn,TK_NotStart,HHI.3020,"Fit,Weld for Manhole ,Nozzles on Shell",,1640,10,20,0,0,0,20,0,0,0,,,,2014-11-05 16:00,2014-11-08 16:00,,2014-04-15 07:00,2014-04-16 17:00,2014-04-15 07:00,2014-04-16 17:00,2014-04-15 07:00,2014-04-16 17:00,2014-11-05 16:00,2014-11-08 16:00,,PT_Normal,,,,,t2dyUM5eRnSZilbfgu1OPA,qJpWPpbWVU+rYAyNWohVHg,,,N,0,0,,,2014-02-17 15:27,2014-03-01 17:08,admin,admin,
1649,128447,6764,35462,6640,0,N,N,N,CP_Drtn,TT_Task,DT_FixedDrtn,TK_NotStart,HHI.3053,Erect & Tack Shell Course # 5 & Install Stagging Brackets,,1630,0,20,0,380,380,20,48,0,48,,,,2014-11-30 16:00,2014-12-02 16:00,,2014-05-11 07:00,2014-05-12 17:00,2014-05-11 07:00,2014-05-12 17:00,2014-05-11 07:00,2014-05-12 17:00,2014-11-30 16:00,2014-12-02 16:00,,PT_Normal,,,,,EDHObDOtQjqNGsnm7h69bA,AmSfcp/1R7W22HR0+8ewXg,,,N,0,0,,,2014-02-17 15:27,2014-03-01 17:08,admin,admin,
1650,128448,6764,35462,6640,0,N,N,N,CP_Drtn,TT_Task,DT_FixedDrtn,TK_NotStart,HHI.3054,Weld Outer Vertical Seam /Install the Stairways support on Shell,,1632,0,10,0,167.111111,167.111111,10,33.066667,0,33.066667,,,,2014-12-02 08:00,2014-12-03 08:00,,2014-05-12 07:00,2014-05-12 17:00,2014-05-12 07:00,2014-05-12 17:00,2014-05-12 07:00,2014-05-12 17:00,2014-12-02 08:00,2014-12-03 08:00,,PT_Normal,,,,,IEzhNNJ9RRmDxlhHtNDxhw,VyW7xQ1cQwaYAmEL0EzI/w,,,N,0,0,,,2014-02-17 15:27,2014-03-01 17:08,admin,admin,
1651,128449,6764,35462,6640,0,N,N,N,CP_Drtn,TT_Task,DT_FixedDrtn,TK_NotStart,HHI.3055,Backgouge & NDT Inside Vertical Seam,,1632,0,10,0,90.666666,90.666666,10,42.666666,0,42.666666,,,,2014-12-02 08:00,2014-12-03 08:00,,2014-05-12 07:00,2014-05-12 17:00,2014-05-12 07:00,2014-05-12 17:00,2014-05-12 07:00,2014-05-12 17:00,2014-12-02 08:00,2014-12-03 08:00,,PT_Normal,,,,,IuN0Nh5GS3ypyeG8xscC7w,SRCHG8RyTMCxgVaJ9TD7+g,,,N,0,0,,,2014-02-17 15:27,2014-03-01 17:08,admin,admin,
1652,128450,6764,35462,6640,0,N,N,N,CP_Drtn,TT_Task,DT_FixedDrtn,TK_NotStart,HHI.3056,Weld Inside Vertical Seam,,1632,0,10,0,160,160,10,33.066667,0,33.066667,,,,2014-12-03 08:00,2014-12-04 08:00,,2014-05-13 07:00,2014-05-13 17:00,2014-05-13 07:00,2014-05-13 17:00,2014-05-13 07:00,2014-05-13 17:00,2014-12-03 08:00,2014-12-04 08:00,,PT_Normal,,,,,sI20llzwQpiMttbr3r5ybw,XVsddY+1S1ekh/guXtMoFw,,,N,0,0,,,2014-02-17 15:27,2014-03-01 17:08,admin,admin,
1653,128451,6764,35462,6640,0,N,N,N,CP_Drtn,TT_Task,DT_FixedDrtn,TK_NotStart,HHI.3057,"""""Weld Outer Horizontal Seam between Shell Course # 4 & 5""""",,1632,0,10,0,320,320,10,85.333334,0,85.333334,,,,2014-12-04 08:00,2014-12-06 08:00,,2014-05-14 07:00,2014-05-14 17:00,2014-05-14 07:00,2014-05-14 17:00,2014-05-14 07:00,2014-05-14 17:00,2014-12-04 08:00,2014-12-06 08:00,,PT_Normal,,,,,iawNjEKMTK6ZV4u4yPuTBA,e166thn5TSap50IwUIyG/w,,,N,0,0,,,2014-02-17 15:27,2014-03-01 17:08,admin,admin,
1654,128452,6764,35462,6640,0,N,N,N,CP_Drtn,TT_Task,DT_FixedDrtn,TK_NotStart,HHI.3058,"""""Backgouge & NDT Inside Horizontal Seam between Shell Course# 4 & 5""""",,1632,0,10,0,80,80,10,33.066667,0,33.066667,,,,2014-12-04 08:00,2014-12-06 08:00,,2014-05-14 07:00,2014-05-14 17:00,2014-05-14 07:00,2014-05-14 17:00,2014-05-14 07:00,2014-05-14 17:00,2014-12-04 08:00,2014-12-06 08:00,,PT_Normal,,,,,DXSOLQ9fREKN1+QihHmlfQ,oUkWKMmWTHu3BaifcROXfA,,,N,0,0,,,2014-02-17 15:27,2014-03-01 17:08,admin,admin,
1655,128453,6764,35462,6640,0,N,N,N,CP_Drtn,TT_Task,DT_FixedDrtn,TK_NotStart,HHI.3059,"Weld Inner Horizontal Seam between Shell Course # 4 & 5""""",,1632,0,10,0,405.333336,405.333336,10,85.333333,0,85.333333,,,,2014-12-06 08:00,2014-12-07 08:00,,2014-05-15 07:00,2014-05-15 17:00,2014-05-15 07:00,2014-05-15 17:00,2014-05-15 07:00,2014-05-15 17:00,2014-12-06 08:00,2014-12-07 08:00,,PT_Normal,,,,,yJRj0WS5RBefYe35aym0CA,IU10EaLcT0WnsT9eLdmIJw,,,N,0,0,,,2014-02-17 15:27,2014-03-01 17:08,admin,admin,
1656,128454,6764,35462,6640,0,N,N,N,CP_Drtn,TT_Task,DT_FixedDrtn,TK_NotStart,HHI.3061,"Quailty Check(Visual Inspection,PT,Air Leak Test for Shell Nozzle))",,1630,0,50,0,27.111111,27.111111,50,33.066667,0,33.066667,,,,2014-11-30 16:00,2014-12-06 16:00,,2014-05-11 07:00,2014-05-15 17:00,2014-05-11 07:00,2014-05-15 17:00,2014-05-11 07:00,2014-05-15 17:00,2014-11-30 16:00,2014-12-06 16:00,,PT_Normal,,,,,PyYZ4YFDRca1POSgTDJsag,mtVZY7oYSfS52SKp31itYQ,,,N,0,0,,,2014-02-17 15:27,2014-03-01 17:08,admin,admin,
1657,128455,6764,35462,6640,0,N,N,N,CP_Drtn,TT_Task,DT_FixedDrtn,TK_NotStart,HHI.3060,"Fit,Weld Nozzle on Shell",,1632,2,8,0,0,0,8,0,0,0,,,,2014-12-06 08:00,2014-12-06 16:00,,2014-05-15 07:00,2014-05-15 15:00,2014-05-15 07:00,2014-05-15 15:00,2014-05-15 07:00,2014-05-15 15:00,2014-12-06 08:00,2014-12-06 16:00,,PT_Normal,,,,,TlZC/lXWTOu0VvJVOcD4eg,,,,N,0,0,,,2014-02-17 15:27,2014-03-01 17:08,admin,admin,
1658,128456,6764,35463,6640,0,N,N,N,CP_Drtn,TT_Task,DT_FixedDrtn,TK_NotStart,HHI.3034,Perform RT,,1630,0,10,0,0,0,10,0,0,0,,,,2014-11-18 16:00,2014-11-19 16:00,,2014-04-29 07:00,2014-04-29 17:00,2014-04-29 07:00,2014-04-29 17:00,2014-04-29 07:00,2014-04-29 17:00,2014-11-18 16:00,2014-11-19 16:00,,PT_Normal,,,,,q4cGyXqZQB67uqrOLYFiTg,GWmJtkqsBUq0z1uOQfCLww,,,N,0,0,,,2014-02-17 15:27,2014-03-01 17:08,admin,admin,
1659,128457,6764,35464,6640,0,N,N,N,CP_Drtn,TT_Task,DT_FixedDrtn,TK_NotStart,HHI.3062,Perform RT,,1630,0,10,0,0,0,10,0,0,0,,,,2014-12-06 16:00,2014-12-07 16:00,,2014-05-17 07:00,2014-05-17 17:00,2014-05-17 07:00,2014-05-17 17:00,2014-05-17 07:00,2014-05-17 17:00,2014-12-06 16:00,2014-12-07 16:00,,PT_Normal,,,,,7FE2I96fRKKngqk4iUFBBg,57QxJzEdjEy1pDYy8+dWuQ,,,N,0,0,,,2014-02-17 15:27,2014-03-01 17:08,admin,admin,
1660,128458,6764,35466,6640,0,N,N,N,CP_Drtn,TT_Task,DT_FixedDrtn,TK_NotStart,HHI.3064,Weld Outer Horizontal Seam between Shell Course # 5 & Top Angle,,1630,0,10,0,128,128,10,33.066667,0,33.066667,,,,2014-12-07 16:00,2014-12-08 16:00,,2014-05-18 07:00,2014-05-18 17:00,2014-05-18 07:00,2014-05-18 17:00,2014-05-18 07:00,2014-05-18 17:00,2014-12-07 16:00,2014-12-08 16:00,,PT_Normal,,,,,2EG+8cDdQ4yWY3MjcPdsBQ,JvvGVt45RRCRe/PZV/zULQ,,,N,0,0,,,2014-02-17 15:27,2014-03-01 17:08,admin,admin,
1661,128459,6764,35466,6640,0,N,N,N,CP_Drtn,TT_Task,DT_FixedDrtn,TK_NotStart,HHI.3065,"""""Backgouge & NDT Inside Horizontal Seam between Shell Course# 7 & Top Angle",,1630,0,10,0,90,90,10,33.066667,0,33.066667,,,,2014-12-08 16:00,2014-12-09 16:00,,2014-05-19 07:00,2014-05-19 17:00,2014-05-19 07:00,2014-05-19 17:00,2014-05-19 07:00,2014-05-19 17:00,2014-12-08 16:00,2014-12-09 16:00,,PT_Normal,,,,,xxBnpzxPTPC31Pos4yGF8A,1JBzkU6KTAGLZW/N67m4PQ,,,N,0,0,,,2014-02-17 15:27,2014-03-01 17:08,admin,admin,
1662,128460,6764,35466,6640,0,N,N,N,CP_Drtn,TT_Task,DT_FixedDrtn,TK_NotStart,HHI.3067,Weld Inner Horizontal Seam between Shell Course # 7 & Top Angle,,1630,0,10,0,191.333334,191.333334,10,33.066667,0,33.066667,,,,2014-12-09 16:00,2014-12-10 16:00,,2014-05-20 07:00,2014-05-20 17:00,2014-05-20 07:00,2014-05-20 17:00,2014-05-20 07:00,2014-05-20 17:00,2014-12-09 16:00,2014-12-10 16:00,,PT_Normal,,,,,UDIieYlVQn+jwY7XSiPz9w,xkyR5i0PQ/mxms0CJVabfg,,,N,0,0,,,2014-02-17 15:27,2014-03-01 17:08,admin,admin,
1663,128461,6764,35466,6640,0,N,N,N,CP_Drtn,TT_Task,DT_FixedDrtn,TK_NotStart,HHI.3069,Quailty Check (Visual Inspection),,1630,0,40,0,42.666664,42.666664,40,42.666667,0,42.666667,,,,2014-12-06 16:00,2014-12-10 16:00,,2014-05-17 07:00,2014-05-20 17:00,2014-05-17 07:00,2014-05-20 17:00,2014-05-17 07:00,2014-05-20 17:00,2014-12-06 16:00,2014-12-10 16:00,,PT_Normal,,,,,jdS1rWTWTReC69Zrz1h53A,puuHkI7GSieHTAHzZ+Lr6Q,,,N,0,0,,,2014-02-17 15:27,2014-03-01 17:08,admin,admin,
1664,128462,6764,35466,6640,0,N,N,N,CP_Drtn,TT_Task,DT_FixedDrtn,TK_NotStart,HHI.3066,"Fit up,Tack of Gusset Plates to Shell",,1640,10,10,0,341.333337,341.333337,10,17.066667,0,17.066667,,,,2014-12-08 16:00,2014-12-09 16:00,,2014-05-18 07:00,2014-05-18 17:00,2014-05-18 07:00,2014-05-18 17:00,2014-05-18 07:00,2014-05-18 17:00,2014-12-08 16:00,2014-12-09 16:00,,PT_Normal,,,,,xDjL3DaCR/e4pYwVr3eRlQ,WRu6BV2mTceP+d9OQ5RfBA,,,N,0,0,,,2014-02-17 15:27,2014-03-01 17:08,admin,admin,
1665,128463,6764,35466,6640,0,N,N,N,CP_Drtn,TT_Task,DT_FixedDrtn,TK_NotStart,HHI.3068,Welding of Gusset Plates,,1630,0,10,0,202.666668,202.666668,10,85.333333,0,85.333333,,,,2014-12-09 16:00,2014-12-10 16:00,,2014-05-20 07:00,2014-05-20 17:00,2014-05-20 07:00,2014-05-20 17:00,2014-05-20 07:00,2014-05-20 17:00,2014-12-09 16:00,2014-12-10 16:00,,PT_Normal,,,,,QhPIA1dXQtqqjfXyp0yLuA,Lx6/tZJQQuqoYcNDllu+pg,,,N,0,0,,,2014-02-17 15:27,2014-03-01 17:08,admin,admin,
1666,128464,6764,35466,6640,0,N,N,N,CP_Drtn,TT_Task,DT_FixedDrtn,TK_NotStart,HHI.3063,"Fit & Tack 
Shell Course #5 & Top Angle",,1630,0,10,0,255.999999,255.999999,10,8.533333,0,8.533333,,,,2014-12-06 16:00,2014-12-07 16:00,,2014-05-17 07:00,2014-05-17 17:00,2014-05-17 07:00,2014-05-17 17:00,2014-05-17 07:00,2014-05-17 17:00,2014-12-06 16:00,2014-12-07 16:00,,PT_Normal,,,,,4qSLcefgRumELSplPVMseA,4fRUXfheRh2bqNGfeOIUtA,,,N,0,0,,,2014-02-17 15:27,2014-03-01 17:08,admin,admin,
1667,128465,6764,35467,6640,0,N,N,N,CP_Drtn,TT_Task,DT_FixedDrtn,TK_NotStart,HHI.3071,Erect & Install Rafters to Gusset Plates /Install Internal Piping Brackets/Piping,,1630,0,30,0,1343.999994,1343.999994,30,17.066666,0,17.066666,,,,2014-12-09 16:00,2014-12-13 16:00,,2014-05-20 07:00,2014-05-22 17:00,2014-05-20 07:00,2014-05-22 17:00,2014-05-20 07:00,2014-05-22 17:00,2014-12-09 16:00,2014-12-13 16:00,,PT_Normal,,,,,+1gm28Z8RGW2J5pepAv4YA,kWd0PmqKTkONau9xeEp5/Q,,,N,0,0,,,2014-02-17 15:27,2014-03-01 17:08,admin,admin,
1668,128466,6764,35467,6640,0,N,N,N,CP_Drtn,TT_Task,DT_FixedDrtn,TK_NotStart,HHI.3070,Assembly of Center Ring with Rafters & Purlins,,1630,0,20,0,0,0,20,0,0,0,,,,2014-12-08 16:00,2014-12-10 16:00,,2014-05-19 07:00,2014-05-20 17:00,2014-05-19 07:00,2014-05-20 17:00,2014-05-19 07:00,2014-05-20 17:00,2014-12-08 16:00,2014-12-10 16:00,,PT_Normal,,,,,rfbm3tmHSSuOlyIxWkFU3g,,,,N,0,0,,,2014-02-17 15:27,2014-03-01 17:08,admin,admin,
1669,128467,6764,35468,6640,0,N,N,N,CP_Drtn,TT_Task,DT_FixedDrtn,TK_NotStart,HHI.3072,Prepare/Lay Down Roof Plates (6 Plates),,1630,0,10,0,864.000004,864.000004,10,17.066667,0,17.066667,,,,2014-12-13 16:00,2014-12-14 16:00,,2014-05-24 07:00,2014-05-24 17:00,2014-05-24 07:00,2014-05-24 17:00,2014-05-24 07:00,2014-05-24 17:00,2014-12-13 16:00,2014-12-14 16:00,,PT_Normal,,,,,EyEZ4yw7Qy2JHjtjfnlZtg,yaug2E1oTX++PxDKXpPz/g,,,N,0,0,,,2014-02-17 15:27,2014-03-01 17:08,admin,admin,
1670,128468,6764,35468,6640,0,N,N,N,CP_Drtn,TT_Task,DT_FixedDrtn,TK_NotStart,HHI.3073,Tacking of Roof Plates,,1630,0,10,0,968,968,10,0,0,0,,,,2014-12-13 16:00,2014-12-14 16:00,,2014-05-24 07:00,2014-05-24 17:00,2014-05-24 07:00,2014-05-24 17:00,2014-05-24 07:00,2014-05-24 17:00,2014-12-13 16:00,2014-12-14 16:00,,PT_Normal,,,,,bZRtZE0oQuqAnCBABFyEMQ,nU6ntAuDTyGQEMg77FJ+wA,,,N,0,0,,,2014-02-17 15:27,2014-03-01 17:08,admin,admin,
1671,128469,6764,35468,6640,0,N,N,N,CP_Drtn,TT_Task,DT_FixedDrtn,TK_NotStart,HHI.3074,Welding of Roof Plates (Short Seams),,1630,0,10,0,544,544,10,128,0,128,,,,2014-12-15 16:00,2014-12-16 16:00,,2014-05-26 07:00,2014-05-26 17:00,2014-05-26 07:00,2014-05-26 17:00,2014-05-26 07:00,2014-05-26 17:00,2014-12-15 16:00,2014-12-16 16:00,,PT_Normal,,,,,Xg0uG2hqQY6Jzp9b4SaNYQ,lOaPZbaGRNm99bKlOQtD1w,,,N,0,0,,,2014-02-17 15:27,2014-03-01 17:08,admin,admin,
1672,128470,6764,35468,6640,0,N,N,N,CP_Drtn,TT_Task,DT_FixedDrtn,TK_NotStart,HHI.3075,Welding of Roof Plates (Long Seams),,1630,0,20,0,1728.000001,1728.000001,20,249.6,0,249.6,,,,2014-12-15 16:00,2014-12-17 16:00,,2014-05-26 07:00,2014-05-27 17:00,2014-05-26 07:00,2014-05-27 17:00,2014-05-26 07:00,2014-05-27 17:00,2014-12-15 16:00,2014-12-17 16:00,,PT_Normal,,,,,hdqCX78TRZ2+9slGyKcs0A,cwQbwNuoTLeV1nYINHd/XQ,,,N,0,0,,,2014-02-17 15:27,2014-03-01 17:08,admin,admin,
1673,128471,6764,35468,6640,0,N,N,N,CP_Drtn,TT_Task,DT_FixedDrtn,TK_NotStart,HHI.3076,Tack of Roof Plates to Curb Angle,,1650,20,10,0,416,416,10,0,0,0,,,,2014-12-16 16:00,2014-12-17 16:00,,2014-05-25 07:00,2014-05-25 17:00,2014-05-25 07:00,2014-05-25 17:00,2014-05-25 07:00,2014-05-25 17:00,2014-12-16 16:00,2014-12-17 16:00,,PT_Normal,,,,,MgjT8V7iRgKzluKvJeZEwA,Vz+NMYIsQ8OC+OuHlrH5Qg,,,N,0,0,,,2014-02-17 15:27,2014-03-01 17:08,admin,admin,
1674,128472,6764,35468,6640,0,N,N,N,CP_Drtn,TT_Task,DT_FixedDrtn,TK_NotStart,HHI.3077,Welding of Roof Plates to Top Angle,,1630,0,10,0,608.000003,608.000003,10,85.333333,0,85.333333,,,,2014-12-17 16:00,2014-12-18 16:00,,2014-05-28 07:00,2014-05-28 17:00,2014-05-28 07:00,2014-05-28 17:00,2014-05-28 07:00,2014-05-28 17:00,2014-12-17 16:00,2014-12-18 16:00,,PT_Normal,,,,,/psMFkauRFykq964E0Md1w,Tiub6DMKT7qcCORrGs6Naw,,,N,0,0,,,2014-02-17 15:27,2014-03-01 17:08,admin,admin,
1675,128473,6764,35468,6640,0,N,N,N,CP_Drtn,TT_Task,DT_FixedDrtn,TK_NotStart,HHI.3080,"Quailty Check (Visual Inspection& Vaccum Box Test,PT,Air Leak Test for Roof Manholes& Nozzles))",,1630,0,80,0,27.111111,27.111111,80,33.066667,0,33.066667,,,,2014-12-13 16:00,2014-12-22 16:00,,2014-05-24 07:00,2014-06-01 17:00,2014-05-24 07:00,2014-06-01 17:00,2014-05-24 07:00,2014-06-01 17:00,2014-12-13 16:00,2014-12-22 16:00,,PT_Normal,,,,,de8MS6QFToiRmp7Gt2dIAg,UKV7MRaKQD+PPWimBFGXsQ,,,N,0,0,,,2014-02-17 15:27,2014-03-01 17:08,admin,admin,
1676,128474,6764,35468,6640,0,N,N,N,CP_Drtn,TT_Task,DT_FixedDrtn,TK_NotStart,HHI.3078,"Fit,Weld Manholes ,Nozzles on Roof /install Top Platform Supports on Roof",,1630,0,20,0,0,0,20,0,0,0,,,,2014-12-20 16:00,2014-12-22 16:00,,2014-05-31 07:00,2014-06-01 17:00,2014-05-31 07:00,2014-06-01 17:00,2014-05-31 07:00,2014-06-01 17:00,2014-12-20 16:00,2014-12-22 16:00,,PT_Normal,,,,,R2mIiy0CRt2iGyTeyNVtRw,kwVagvVoZ0mZIAWkn3VOig,,,N,0,0,,,2014-02-17 15:27,2014-03-01 17:08,admin,admin,
1677,128475,6764,35468,6640,0,N,N,N,CP_Drtn,TT_Task,DT_FixedDrtn,TK_NotStart,HHI.3079,Weld Internal Piping to Nozzle N1,,1630,0,10,0,0,0,10,0,0,0,,,,2014-12-21 16:00,2014-12-22 16:00,,2014-06-01 07:00,2014-06-01 17:00,2014-06-01 07:00,2014-06-01 17:00,2014-06-01 07:00,2014-06-01 17:00,2014-12-21 16:00,2014-12-22 16:00,,PT_Normal,,,,,vJ5icOpvQJ6V9S5HxXsobQ,PF9Bglt11Eu6z+CjIhFQ9w,,,N,0,0,,,2014-02-17 15:27,2014-03-01 17:08,admin,admin,
1678,128476,6764,35469,6640,0,N,N,N,CP_Drtn,TT_Task,DT_FixedDrtn,TK_NotStart,HHI.3081,Erect & Install Stairways & Platforms for Shell,,1630,0,20,0,341.333337,341.333337,20,17.066667,0,17.066667,,,,2014-12-22 16:00,2014-12-24 16:00,,2014-06-02 07:00,2014-06-03 17:00,2014-06-02 07:00,2014-06-03 17:00,2014-06-02 07:00,2014-06-03 17:00,2014-12-22 16:00,2014-12-24 16:00,,PT_Normal,,,,,q5IsUnIQQ42jYU2b86bl2g,8luPrszbRvCO9llbnOtarw,,,N,0,0,,,2014-02-17 15:27,2014-03-01 17:08,admin,admin,
1679,128477,6764,35469,6640,0,N,N,N,CP_Drtn,TT_Task,DT_FixedDrtn,TK_NotStart,HHI.3082,Erect & Install Stairways & Platforms & Handrails for Roof,,1630,0,20,0,341.333337,341.333337,20,17.066667,0,17.066667,,,,2014-12-24 16:00,2014-12-27 16:00,,2014-06-04 07:00,2014-06-05 17:00,2014-06-04 07:00,2014-06-05 17:00,2014-06-04 07:00,2014-06-05 17:00,2014-12-24 16:00,2014-12-27 16:00,,PT_Normal,,,,,6/fVjv/pQzeQBONjGaU61g,JC++5UrkQX+zfYQ2erpMKw,,,N,0,0,,,2014-02-17 15:27,2014-03-01 17:08,admin,admin,
1680,128478,6764,35469,6640,0,N,N,N,CP_Drtn,TT_Task,DT_FixedDrtn,TK_NotStart,HHI.3083,Quality Check,,1630,0,10,0,0,0,10,0,0,0,,,,2014-12-27 16:00,2014-12-28 16:00,,2014-06-07 07:00,2014-06-07 17:00,2014-06-07 07:00,2014-06-07 17:00,2014-06-07 07:00,2014-06-07 17:00,2014-12-27 16:00,2014-12-28 16:00,,PT_Normal,,,,,ZOtZ816XTWKE5+4/T3h/4A,PP9WkB+s00WruaxVYjqKcA,,,N,0,0,,,2014-02-17 15:27,2014-03-01 17:08,admin,admin,
1681,128479,6764,35470,6640,0,N,N,N,CP_Drtn,TT_Task,DT_FixedDrtn,TK_NotStart,HHI.3007,Prepare & Lay Down Bottom Plates,,1630,0,10,0,347.999998,347.999998,10,25.6,0,25.6,,,,2014-10-26 16:00,2014-10-27 16:00,,2014-04-06 07:00,2014-04-06 17:00,2014-04-06 07:00,2014-04-06 17:00,2014-04-06 07:00,2014-04-06 17:00,2014-10-26 16:00,2014-10-27 16:00,,PT_Normal,,,,,fwgSq/0pQGK/FhU+fG+ERQ,cSuqDDb+QJmAnEmAz7DsJA,,,N,0,0,,,2014-02-17 15:27,2014-03-01 17:08,admin,admin,
1682,128480,6764,35470,6640,0,N,N,N,CP_Drtn,TT_Task,DT_FixedDrtn,TK_NotStart,HHI.3014,Quailty Check (Visual Inspection& Vaccum Box Test),,1630,0,60,0,21.333334,21.333334,60,42.666666,0,42.666666,,,,2014-10-26 16:00,2014-11-02 16:00,,2014-04-06 07:00,2014-04-12 17:00,2014-04-06 07:00,2014-04-12 17:00,2014-04-06 07:00,2014-04-12 17:00,2014-10-26 16:00,2014-11-02 16:00,,PT_Normal,,,,,95o54kBWSWigAOZGY5z5yw,XZOJUaRwRAK6ogOg9ogpWA,,,N,0,0,,,2014-02-17 15:27,2014-03-01 17:08,admin,admin,
1683,128481,6764,35470,6640,0,N,N,N,CP_Drtn,TT_Task,DT_FixedDrtn,TK_NotStart,HHI.3011,"Erect,Fitup of Sump",,1640,10,10,0,51.999998,51.999998,10,42.666666,0,42.666666,,,,2014-10-30 16:00,2014-11-01 16:00,,2014-04-09 07:00,2014-04-09 17:00,2014-04-09 07:00,2014-04-09 17:00,2014-04-09 07:00,2014-04-09 17:00,2014-10-30 16:00,2014-11-01 16:00,,PT_Normal,,,,,vTtShL6xTgaehsR0gP+4NA,azLvu2U/T7yLYVzFoh2CDg,,,N,0,0,,,2014-02-17 15:27,2014-03-01 17:08,admin,admin,
1684,128482,6764,35470,6640,0,N,N,N,CP_Drtn,TT_Task,DT_FixedDrtn,TK_NotStart,HHI.3013,Weld Sump,,1630,0,10,0,17.066666,17.066666,10,42.666666,0,42.666666,,,,2014-11-01 16:00,2014-11-02 16:00,,2014-04-12 07:00,2014-04-12 17:00,2014-04-12 07:00,2014-04-12 17:00,2014-04-12 07:00,2014-04-12 17:00,2014-11-01 16:00,2014-11-02 16:00,,PT_Normal,,,,,myyhbAlKQUSTd0haY5gPoQ,SqxN3XVPRMGrmG0HRhHfKQ,,,N,0,0,,,2014-02-17 15:27,2014-03-01 17:08,admin,admin,
1685,128483,6764,35470,6640,0,N,N,N,CP_Drtn,TT_Task,DT_FixedDrtn,TK_NotStart,HHI.3008,Fit/Tack Bottom Plates-Short Seams,,1630,0,10,0,0,0,10,0,0,0,,,,2014-10-27 16:00,2014-10-28 16:00,,2014-04-07 07:00,2014-04-07 17:00,2014-04-07 07:00,2014-04-07 17:00,2014-04-07 07:00,2014-04-07 17:00,2014-10-27 16:00,2014-10-28 16:00,,PT_Normal,,,,,/CwlJ8D5SWGaZbXtbfkZ7Q,uhkdYaWUx0+umBsFw9lChQ,,,N,0,0,,,2014-02-17 15:27,2014-03-01 17:08,admin,admin,
1686,128484,6764,35470,6640,0,N,N,N,CP_Drtn,TT_Task,DT_FixedDrtn,TK_NotStart,HHI.3009,Weld Short Seams,,1630,0,10,0,0,0,10,0,0,0,,,,2014-10-28 16:00,2014-10-29 16:00,,2014-04-08 07:00,2014-04-08 17:00,2014-04-08 07:00,2014-04-08 17:00,2014-04-08 07:00,2014-04-08 17:00,2014-10-28 16:00,2014-10-29 16:00,,PT_Normal,,,,,R/5IzP9MTXOSZ7MlNuYidg,+WnS43UkRUOt/DhBTcv3Hw,,,N,0,0,,,2014-02-17 15:27,2014-03-01 17:08,admin,admin,
1687,128485,6764,35470,6640,0,N,N,N,CP_Drtn,TT_Task,DT_FixedDrtn,TK_NotStart,HHI.3010,Fit/Tack Bottom Plates-Long Seams,,1630,0,10,0,0,0,10,0,0,0,,,,2014-10-28 16:00,2014-10-29 16:00,,2014-04-08 07:00,2014-04-08 17:00,2014-04-08 07:00,2014-04-08 17:00,2014-04-08 07:00,2014-04-08 17:00,2014-10-28 16:00,2014-10-29 16:00,,PT_Normal,,,,,lrSiwMaGROyzOyvpvjh2IA,YK2VI0eP302gnVkOZh9TDA,,,N,0,0,,,2014-02-17 15:27,2014-03-01 17:08,admin,admin,
1688,128486,6764,35470,6640,0,N,N,N,CP_Drtn,TT_Task,DT_FixedDrtn,TK_NotStart,HHI.3012,Weld Long Seams,,1630,0,20,0,0,0,20,0,0,0,,,,2014-10-30 16:00,2014-11-02 16:00,,2014-04-10 07:00,2014-04-12 17:00,2014-04-10 07:00,2014-04-12 17:00,2014-04-10 07:00,2014-04-12 17:00,2014-10-30 16:00,2014-11-02 16:00,,PT_Normal,,,,,3Q+Ydhv/QYON7lWulgY4vg,AsgK1LnCDEKHVNCBxqz+EA,,,N,0,0,,,2014-02-17 15:27,2014-03-01 17:08,admin,admin,
1689,128487,6764,35471,6640,0,N,N,N,CP_Drtn,TT_Task,DT_FixedDrtn,TK_NotStart,HHI.3024,Weld Outer Vertical Seam /Install the Stairways support on Shell,,1630,0,10,0,384.000002,384.000002,10,85.333333,0,85.333333,,,,2014-11-09 16:00,2014-11-10 16:00,,2014-04-20 07:00,2014-04-20 17:00,2014-04-20 07:00,2014-04-20 17:00,2014-04-20 07:00,2014-04-20 17:00,2014-11-09 16:00,2014-11-10 16:00,,PT_Normal,,,,,zm3UaPuKTxuBo/ddoO+ILw,WdSX8h6yTQqe1/hl2V+lcA,,,N,0,0,,,2014-02-17 15:27,2014-03-01 17:08,admin,admin,
1690,128488,6764,35471,6640,0,N,N,N,CP_Drtn,TT_Task,DT_FixedDrtn,TK_NotStart,HHI.3025,"Backgouge,Grinding & NDT Inside Vertical Seam",,1630,0,10,0,101.333333,101.333333,10,33.066667,0,33.066667,,,,2014-11-09 16:00,2014-11-10 16:00,,2014-04-20 07:00,2014-04-20 17:00,2014-04-20 07:00,2014-04-20 17:00,2014-04-20 07:00,2014-04-20 17:00,2014-11-09 16:00,2014-11-10 16:00,,PT_Normal,,,,,JLTaLWtITxqvFj+JWjhfrw,A5OZqoRhT82pbNbnwnKb4A,,,N,0,0,,,2014-02-17 15:27,2014-03-01 17:08,admin,admin,
1691,128489,6764,35471,6640,0,N,N,N,CP_Drtn,TT_Task,DT_FixedDrtn,TK_NotStart,HHI.3026,Weld Inside Vertical Seam,,1630,0,10,0,202.666668,202.666668,10,85.333333,0,85.333333,,,,2014-11-10 16:00,2014-11-11 16:00,,2014-04-21 07:00,2014-04-21 17:00,2014-04-21 07:00,2014-04-21 17:00,2014-04-21 07:00,2014-04-21 17:00,2014-11-10 16:00,2014-11-11 16:00,,PT_Normal,,,,,/1XPmoC3TNGtCBw5gPfjIQ,h0+iKTxZTUKGnnF2vbxz9w,,,N,0,0,,,2014-02-17 15:27,2014-03-01 17:08,admin,admin,
1692,128490,6764,35471,6640,0,N,N,N,CP_Drtn,TT_Task,DT_FixedDrtn,TK_NotStart,HHI.3027,"""""Weld Outer Horizontal Seam between Shell Course # 1 & 2""""",,1630,0,10,0,608,608,10,166.4,0,166.4,,,,2014-11-11 16:00,2014-11-12 16:00,,2014-04-22 07:00,2014-04-22 17:00,2014-04-22 07:00,2014-04-22 17:00,2014-04-22 07:00,2014-04-22 17:00,2014-11-11 16:00,2014-11-12 16:00,,PT_Normal,,,,,vvBird2JRj2i7YteeI3u7A,06rvLb3xTIqifYvuihqdRw,,,N,0,0,,,2014-02-17 15:27,2014-03-01 17:08,admin,admin,
1693,128491,6764,35471,6640,0,N,N,N,CP_Drtn,TT_Task,DT_FixedDrtn,TK_NotStart,HHI.3028,"""""Backgouge & NDT Inside Horizontal Seam between Shell Course# 1 & 2""""",,1630,0,10,0,122.666668,122.666668,10,85.333333,0,85.333333,,,,2014-11-11 16:00,2014-11-12 16:00,,2014-04-22 07:00,2014-04-22 17:00,2014-04-22 07:00,2014-04-22 17:00,2014-04-22 07:00,2014-04-22 17:00,2014-11-11 16:00,2014-11-12 16:00,,PT_Normal,,,,,nynT9kRiS+qOdF+gLRBytw,HmrJubckRv6zGqwx33uYGg,,,N,0,0,,,2014-02-17 15:27,2014-03-01 17:08,admin,admin,
1694,128492,6764,35471,6640,0,N,N,N,CP_Drtn,TT_Task,DT_FixedDrtn,TK_NotStart,HHI.3029,"Weld Inner Horizontal Seam between Shell Course # 1 & 2""""",,1630,0,10,0,608,608,10,166.4,0,166.4,,,,2014-11-12 16:00,2014-11-13 16:00,,2014-04-23 07:00,2014-04-23 17:00,2014-04-23 07:00,2014-04-23 17:00,2014-04-23 07:00,2014-04-23 17:00,2014-11-12 16:00,2014-11-13 16:00,,PT_Normal,,,,,Xj0zLuVvRs+SX4Uozt0/TQ,V5ynLFowSuuH7dy6Cy40LA,,,N,0,0,,,2014-02-17 15:27,2014-03-01 17:08,admin,admin,
1695,128493,6764,35471,6640,0,N,N,N,CP_Drtn,TT_Task,DT_FixedDrtn,TK_NotStart,HHI.3030,Weld Shell Course# 1 to Annular Plate (from inside),,1630,0,10,0,405.333336,405.333336,10,85.333333,0,85.333333,,,,2014-11-13 16:00,2014-11-15 16:00,,2014-04-24 07:00,2014-04-24 17:00,2014-04-24 07:00,2014-04-24 17:00,2014-04-24 07:00,2014-04-24 17:00,2014-11-13 16:00,2014-11-15 16:00,,PT_Normal,,,,,hlRmmSULQx6MmvfjyNSpwA,Ky1BBrIxR0mqt1QWto19ww,,,N,0,0,,,2014-02-17 15:27,2014-03-01 17:08,admin,admin,
1696,128494,6764,35471,6640,0,N,N,N,CP_Drtn,TT_Task,DT_FixedDrtn,TK_NotStart,HHI.3031,"Perform PT from inside,Complete the welding from outside & Perform Vaccum Box Testing",,1630,0,20,0,426.666665,426.666665,20,128,0,128,,,,2014-11-15 16:00,2014-11-17 16:00,,2014-04-26 07:00,2014-04-27 17:00,2014-04-26 07:00,2014-04-27 17:00,2014-04-26 07:00,2014-04-27 17:00,2014-11-15 16:00,2014-11-17 16:00,,PT_Normal,,,,,yG/UM4PNTA2+XpK4fr5fDQ,ZC3nA+5NQAid87LNziXj4Q,,,N,0,0,,,2014-02-17 15:27,2014-03-01 17:08,admin,admin,
1697,128495,6764,35471,6640,0,N,N,N,CP_Drtn,TT_Task,DT_FixedDrtn,TK_NotStart,HHI.3033,Quailty Check(Visual Inspection),,1630,0,90,0,27.111111,27.111111,90,33.066667,0,33.066667,,,,2014-11-08 16:00,2014-11-18 16:00,,2014-04-19 07:00,2014-04-28 17:00,2014-04-19 07:00,2014-04-28 17:00,2014-04-19 07:00,2014-04-28 17:00,2014-11-08 16:00,2014-11-18 16:00,,PT_Normal,,,,,v/7tqDrfT/umSeMxq5IBXg,sMzzmi0fRz6dJbORhn/m8g,,,N,0,0,,,2014-02-17 15:27,2014-03-01 17:08,admin,admin,
1698,128496,6764,35471,6640,0,N,N,N,CP_Drtn,TT_Task,DT_FixedDrtn,TK_NotStart,HHI.3023,Erect & Tack Shell Course # 2 & Install Stagging Brackets,,1630,0,20,0,272,272,20,32,0,32,,,,2014-11-08 16:00,2014-11-10 16:00,,2014-04-19 07:00,2014-04-20 17:00,2014-04-19 07:00,2014-04-20 17:00,2014-04-19 07:00,2014-04-20 17:00,2014-11-08 16:00,2014-11-10 16:00,,PT_Normal,,,,,gj8RRs6ISgi+NUykv6rGsQ,qnNfoX3NRpal3qf8f6i3gg,,,N,0,0,,,2014-02-17 15:27,2014-03-01 17:08,admin,admin,
1699,128497,6764,35471,6640,0,N,N,N,CP_Drtn,TT_Task,DT_FixedDrtn,TK_NotStart,HHI.3032,Weld Bottom Plates to Annular Plate,,1630,0,10,0,0,0,10,0,0,0,,,,2014-11-17 16:00,2014-11-18 16:00,,2014-04-28 07:00,2014-04-28 17:00,2014-04-28 07:00,2014-04-28 17:00,2014-04-28 07:00,2014-04-28 17:00,2014-11-17 16:00,2014-11-18 16:00,,PT_Normal,,,,,UiTs9stOR3OLfvIMhjdFfg,JwH6padSlEeKXthXTKa7lw,,,N,0,0,,,2014-02-17 15:27,2014-03-01 17:08,admin,admin,
1700,128498,6764,35472,6640,0,N,N,N,CP_Drtn,TT_Task,DT_FixedDrtn,TK_NotStart,HHI.3044,Erect & Tack Shell Course # 4 & Install Stagging Brackets,,1630,0,20,0,480,480,20,48,0,48,,,,2014-11-24 16:00,2014-11-26 16:00,,2014-05-05 07:00,2014-05-06 17:00,2014-05-05 07:00,2014-05-06 17:00,2014-05-05 07:00,2014-05-06 17:00,2014-11-24 16:00,2014-11-26 16:00,,PT_Normal,,,,,opWSwQtQQd26vBBnXYZLnQ,vYNQ4nt7Rjq0KyUH4ACYUQ,,,N,0,0,,,2014-02-17 15:27,2014-03-01 17:08,admin,admin,
1701,128499,6764,35472,6640,0,N,N,N,CP_Drtn,TT_Task,DT_FixedDrtn,TK_NotStart,HHI.3045,Weld Outer Vertical Seam /Install the Stairways support on Shell,,1630,0,10,0,160,160,10,85.333334,0,85.333334,,,,2014-11-25 16:00,2014-11-26 16:00,,2014-05-06 07:00,2014-05-06 17:00,2014-05-06 07:00,2014-05-06 17:00,2014-05-06 07:00,2014-05-06 17:00,2014-11-25 16:00,2014-11-26 16:00,,PT_Normal,,,,,7CXlFqF/Rh6lSFaZpFB2Sg,zM0ry8s4TcSpKrBwurgq8Q,,,N,0,0,,,2014-02-17 15:27,2014-03-01 17:08,admin,admin,
1702,128500,6764,35472,6640,0,N,N,N,CP_Drtn,TT_Task,DT_FixedDrtn,TK_NotStart,HHI.3046,Backgouge & NDT Inside Vertical Seam,,1630,0,10,0,80,80,10,33.066667,0,33.066667,,,,2014-11-25 16:00,2014-11-26 16:00,,2014-05-06 07:00,2014-05-06 17:00,2014-05-06 07:00,2014-05-06 17:00,2014-05-06 07:00,2014-05-06 17:00,2014-11-25 16:00,2014-11-26 16:00,,PT_Normal,,,,,B2dGuyjoS3WiYlUG7y6Wfw,8XZPDLNHTB6oPxonUstkxQ,,,N,0,0,,,2014-02-17 15:27,2014-03-01 17:08,admin,admin,
1703,128501,6764,35472,6640,0,N,N,N,CP_Drtn,TT_Task,DT_FixedDrtn,TK_NotStart,HHI.3047,Weld Inside Vertical Seam,,1630,0,10,0,202.666668,202.666668,10,85.333333,0,85.333333,,,,2014-11-26 16:00,2014-11-27 16:00,,2014-05-07 07:00,2014-05-07 17:00,2014-05-07 07:00,2014-05-07 17:00,2014-05-07 07:00,2014-05-07 17:00,2014-11-26 16:00,2014-11-27 16:00,,PT_Normal,,,,,NglrmkX+QMeTk5AXLfb9Ag,/qnSxV5TRI6YTuXiWydigA,,,N,0,0,,,2014-02-17 15:27,2014-03-01 17:08,admin,admin,
1704,128502,6764,35472,6640,0,N,N,N,CP_Drtn,TT_Task,DT_FixedDrtn,TK_NotStart,HHI.3048,"Weld Outer Horizontal Seam between Shell Course # 3 & 4""""",,1630,0,10,0,388.266664,388.266664,10,72.96,0,72.96,,,,2014-11-27 16:00,2014-11-29 16:00,,2014-05-08 07:00,2014-05-08 17:00,2014-05-08 07:00,2014-05-08 17:00,2014-05-08 07:00,2014-05-08 17:00,2014-11-27 16:00,2014-11-29 16:00,,PT_Normal,,,,,eoZTm6v/RRmWnP4KivtULw,tNRyVYCbQKeK3AhtrYm9Yw,,,N,0,0,,,2014-02-17 15:27,2014-03-01 17:08,admin,admin,
1705,128503,6764,35472,6640,0,N,N,N,CP_Drtn,TT_Task,DT_FixedDrtn,TK_NotStart,HHI.3049,"Backgouge & NDT Inside Horizontal Seam between Shell Course# 3 & 4""""",,1630,0,10,0,101.333333,101.333333,10,33.066667,0,33.066667,,,,2014-11-27 16:00,2014-11-29 16:00,,2014-05-08 07:00,2014-05-08 17:00,2014-05-08 07:00,2014-05-08 17:00,2014-05-08 07:00,2014-05-08 17:00,2014-11-27 16:00,2014-11-29 16:00,,PT_Normal,,,,,E0ijrcEES72CtbHG0KCPHw,r8PHxJ42QhG2mfoRI8tayg,,,N,0,0,,,2014-02-17 15:27,2014-03-01 17:08,admin,admin,
1706,128504,6764,35472,6640,0,N,N,N,CP_Drtn,TT_Task,DT_FixedDrtn,TK_NotStart,HHI.3050,"Weld Inner Horizontal Seam between Shell Course # 3 & 4""""",,1630,0,10,0,388.266664,388.266664,10,72.96,0,72.96,,,,2014-11-29 16:00,2014-11-30 16:00,,2014-05-10 07:00,2014-05-10 17:00,2014-05-10 07:00,2014-05-10 17:00,2014-05-10 07:00,2014-05-10 17:00,2014-11-29 16:00,2014-11-30 16:00,,PT_Normal,,,,,9KrvC4o0R4ie5NwTHCQC3A,p1t3yFSARvOHHXiwUSkFgA,,,N,0,0,,,2014-02-17 15:27,2014-03-01 17:08,admin,admin,
1707,128505,6764,35472,6640,0,N,N,N,CP_Drtn,TT_Task,DT_FixedDrtn,TK_NotStart,HHI.3051,Quailty Check(Visual Inspection),,1630,0,50,0,34.222222,34.222222,50,33.066667,0,33.066667,,,,2014-11-24 16:00,2014-11-30 16:00,,2014-05-05 07:00,2014-05-10 17:00,2014-05-05 07:00,2014-05-10 17:00,2014-05-05 07:00,2014-05-10 17:00,2014-11-24 16:00,2014-11-30 16:00,,PT_Normal,,,,,gKG8rV1OSq+leMdAn3WiuA,MdcOImQ2Qa63hbEXRuGvTw,,,N,0,0,,,2014-02-17 15:27,2014-03-01 17:08,admin,admin,
1708,128506,6764,35473,6640,0,N,N,N,CP_Drtn,TT_Task,DT_FixedDrtn,TK_NotStart,HHI.3006,Perform RT,,1630,0,10,0,0,0,10,0,0,0,,,,2014-10-26 16:00,2014-10-27 16:00,,2014-04-06 07:00,2014-04-06 17:00,2014-04-06 07:00,2014-04-06 17:00,2014-04-06 07:00,2014-04-06 17:00,2014-10-26 16:00,2014-10-27 16:00,,PT_Normal,,,,,Xvq+OtKOT1CgBD/yITQOmQ,jHDIYLCM2Uu+vVJjZVQXMw,,,N,0,0,,,2014-02-17 15:27,2014-03-01 17:08,admin,admin,
1709,128507,6764,35474,6640,0,N,N,N,CP_Drtn,TT_Task,DT_FixedDrtn,TK_NotStart,HHI.3084,Mechanical Completion (MCC) & Final Isnpection Before Hydrotesting,,1630,0,10,0,16,16,10,40,0,40,,,,2014-12-28 16:00,2014-12-29 16:00,,2014-06-08 07:00,2014-06-08 17:00,2014-06-08 07:00,2014-06-08 17:00,2014-06-08 07:00,2014-06-08 17:00,2014-12-28 16:00,2014-12-29 16:00,,PT_Normal,,,,,JPBUSXSWToq65tE3PJjYCw,xONAK+hKSFm7ujAE4ajU/g,,,N,0,0,,,2014-02-17 15:27,2014-03-01 17:08,admin,admin,
1710,128508,6764,35475,6640,0,N,N,N,CP_Drtn,TT_Task,DT_FixedDrtn,TK_NotStart,HHI.3043,Perform RT,,1630,0,10,0,0,0,10,0,0,0,,,,2014-11-24 16:00,2014-11-25 16:00,,2014-05-05 07:00,2014-05-05 17:00,2014-05-05 07:00,2014-05-05 17:00,2014-05-05 07:00,2014-05-05 17:00,2014-11-24 16:00,2014-11-25 16:00,,PT_Normal,,,,,GEhe89hMQ4KjR+5NMFydDQ,aUP+CvH/Rk+3o/Lzz8hirw,,,N,0,0,,,2014-02-17 15:27,2014-03-01 17:08,admin,admin,
1711,128509,6764,35476,6640,0,N,N,N,CP_Drtn,TT_Task,DT_FixedDrtn,TK_NotStart,HHI.3035,Erect & Tack Shell Course # 3 & Install Stagging Brackets,,1630,0,20,0,500,500,20,48,0,48,,,,2014-11-18 16:00,2014-11-20 16:00,,2014-04-29 07:00,2014-04-30 17:00,2014-04-29 07:00,2014-04-30 17:00,2014-04-29 07:00,2014-04-30 17:00,2014-11-18 16:00,2014-11-20 16:00,,PT_Normal,,,,,ZVQp66CeSzKfUmjTu4EopQ,Hz2/2CrFSEyjfCNLFS/qdw,,,N,0,0,,,2014-02-17 15:27,2014-03-01 17:08,admin,admin,
1712,128510,6764,35476,6640,0,N,N,N,CP_Drtn,TT_Task,DT_FixedDrtn,TK_NotStart,HHI.3036,Weld Outer Vertical Seam /Install the Stairways support on Shell,,1630,0,10,0,160,160,10,85.333334,0,85.333334,,,,2014-11-19 16:00,2014-11-20 16:00,,2014-04-30 07:00,2014-04-30 17:00,2014-04-30 07:00,2014-04-30 17:00,2014-04-30 07:00,2014-04-30 17:00,2014-11-19 16:00,2014-11-20 16:00,,PT_Normal,,,,,1D2ru7lTQvCS48RhfiNg7w,VxJcE5hBQUaQLsKUyxuEoA,,,N,0,0,,,2014-02-17 15:27,2014-03-01 17:08,admin,admin,
1713,128511,6764,35476,6640,0,N,N,N,CP_Drtn,TT_Task,DT_FixedDrtn,TK_NotStart,HHI.3037,Backgouge & NDT Inside Vertical Seam,,1630,0,10,0,80,80,10,33.066667,0,33.066667,,,,2014-11-19 16:00,2014-11-20 16:00,,2014-04-30 07:00,2014-04-30 17:00,2014-04-30 07:00,2014-04-30 17:00,2014-04-30 07:00,2014-04-30 17:00,2014-11-19 16:00,2014-11-20 16:00,,PT_Normal,,,,,bxwT4okuTomWZH6gUPA2bw,aznCFY3aTfaHQJ2QQcPEWg,,,N,0,0,,,2014-02-17 15:27,2014-03-01 17:08,admin,admin,
1714,128512,6764,35476,6640,0,N,N,N,CP_Drtn,TT_Task,DT_FixedDrtn,TK_NotStart,HHI.3038,Weld Inside Vertical Seam,,1630,0,10,0,202.666668,202.666668,10,85.333333,0,85.333333,,,,2014-11-20 16:00,2014-11-22 16:00,,2014-05-01 07:00,2014-05-01 17:00,2014-05-01 07:00,2014-05-01 17:00,2014-05-01 07:00,2014-05-01 17:00,2014-11-20 16:00,2014-11-22 16:00,,PT_Normal,,,,,oNGtN1ckRgu+qJg2StVvqA,/4pMBGHgS7qfoA8tArLxJA,,,N,0,0,,,2014-02-17 15:27,2014-03-01 17:08,admin,admin,
1715,128513,6764,35476,6640,0,N,N,N,CP_Drtn,TT_Task,DT_FixedDrtn,TK_NotStart,HHI.3039,"Weld Outer Horizontal Seam between Shell Course # 2 & 3""""",,1630,0,10,0,608,608,10,128,0,128,,,,2014-11-22 16:00,2014-11-23 16:00,,2014-05-03 07:00,2014-05-03 17:00,2014-05-03 07:00,2014-05-03 17:00,2014-05-03 07:00,2014-05-03 17:00,2014-11-22 16:00,2014-11-23 16:00,,PT_Normal,,,,,sfTpUfywQ1OnQ/p586Ysng,x/NWNRuSSYSf+GCR2xU9Iw,,,N,0,0,,,2014-02-17 15:27,2014-03-01 17:08,admin,admin,
1716,128514,6764,35476,6640,0,N,N,N,CP_Drtn,TT_Task,DT_FixedDrtn,TK_NotStart,HHI.3040,"Backgouge & NDT Inside Horizontal Seam between Shell Course# 2 & 3""""",,1630,0,10,0,87.111111,87.111111,10,33.066667,0,33.066667,,,,2014-11-22 16:00,2014-11-23 16:00,,2014-05-03 07:00,2014-05-03 17:00,2014-05-03 07:00,2014-05-03 17:00,2014-05-03 07:00,2014-05-03 17:00,2014-11-22 16:00,2014-11-23 16:00,,PT_Normal,,,,,ZCm9UuQxTEuDQBsPdRU/Pw,pVoJfkPnTdWxibuJGr32lA,,,N,0,0,,,2014-02-17 15:27,2014-03-01 17:08,admin,admin,
1717,128515,6764,35476,6640,0,N,N,N,CP_Drtn,TT_Task,DT_FixedDrtn,TK_NotStart,HHI.3041,"Weld Inner Horizontal Seam between Shell Course # 2 & 3""""",,1630,0,10,0,608,608,10,128,0,128,,,,2014-11-23 16:00,2014-11-24 16:00,,2014-05-04 07:00,2014-05-04 17:00,2014-05-04 07:00,2014-05-04 17:00,2014-05-04 07:00,2014-05-04 17:00,2014-11-23 16:00,2014-11-24 16:00,,PT_Normal,,,,,4jlnIlYIQlu7aKzp6WCnOw,Ris02MCgSLWW7QFKFBmSsQ,,,N,0,0,,,2014-02-17 15:27,2014-03-01 17:08,admin,admin,
1718,128516,6764,35476,6640,0,N,N,N,CP_Drtn,TT_Task,DT_FixedDrtn,TK_NotStart,HHI.3042,Quailty Check(Visual Inspection),,1630,0,50,0,27.111111,27.111111,50,33.066667,0,33.066667,,,,2014-11-18 16:00,2014-11-24 16:00,,2014-04-29 07:00,2014-05-04 17:00,2014-04-29 07:00,2014-05-04 17:00,2014-04-29 07:00,2014-05-04 17:00,2014-11-18 16:00,2014-11-24 16:00,,PT_Normal,,,,,b1VGP9yYRmWJQuQUXlNinA,SrrmHBlxS0+XK3Si/7rdfg,,,N,0,0,,,2014-02-17 15:27,2014-03-01 17:08,admin,admin,
1719,128517,6764,35477,6640,0,N,N,N,CP_Drtn,TT_Task,DT_FixedDrtn,TK_NotStart,HHI.3052,Perform RT,,1630,0,10,0,0,0,10,0,0,0,,,,2014-11-30 16:00,2014-12-01 16:00,,2014-05-11 07:00,2014-05-11 17:00,2014-05-11 07:00,2014-05-11 17:00,2014-05-11 07:00,2014-05-11 17:00,2014-11-30 16:00,2014-12-01 16:00,,PT_Normal,,,,,Byh1sqGHRgCJCUXZhldggg,/6cai9VLTE2sY94MF15f8w,,,N,0,0,,,2014-02-17 15:27,2014-03-01 17:08,admin,admin,
1720,128518,6764,35478,6640,0,N,N,N,CP_Drtn,TT_Task,DT_FixedDrtn,TK_NotStart,HHI.3003,"Install Sealent,Erect & Tack of Annular Plates",,1630,0,10,0,80,80,10,8,0,8,,,,2014-10-23 16:00,2014-10-25 16:00,,2014-04-03 07:00,2014-04-03 17:00,2014-04-03 07:00,2014-04-03 17:00,2014-04-03 07:00,2014-04-03 17:00,2014-10-23 16:00,2014-10-25 16:00,,PT_Normal,,,,,QkJSMI76SWmzE8KO2EZKRA,097QdWX0SSCLEWFVz2DdGA,,,N,0,0,,,2014-02-17 15:27,2014-03-01 17:08,admin,admin,
1721,128519,6764,35478,6640,0,N,N,N,CP_Drtn,TT_Task,DT_FixedDrtn,TK_NotStart,HHI.3004,Welding of Annular Plates,,1640,10,10,0,180,180,10,40,0,40,,,,2014-10-25 16:00,2014-10-26 16:00,,2014-04-03 07:00,2014-04-03 17:00,2014-04-03 07:00,2014-04-03 17:00,2014-04-03 07:00,2014-04-03 17:00,2014-10-25 16:00,2014-10-26 16:00,,PT_Normal,,,,,6mG+BlEIT0aPflBfPaDbDg,oHh7lCJTS+iUEFSmdP+I4Q,,,N,0,0,,,2014-02-17 15:27,2014-03-01 17:08,admin,admin,
1722,128520,6764,35478,6640,0,N,N,N,CP_Drtn,TT_Task,DT_FixedDrtn,TK_NotStart,HHI.3005,"Quailty Check (Visual Inspection,PT & Vaccum Box Test)",,1630,0,20,0,40,40,20,40,0,40,,,,2014-10-23 16:00,2014-10-26 16:00,,2014-04-03 07:00,2014-04-05 17:00,2014-04-03 07:00,2014-04-05 17:00,2014-04-03 07:00,2014-04-05 17:00,2014-10-23 16:00,2014-10-26 16:00,,PT_Normal,,,,,qyW+uYiqTzGjyH6FLJdFZQ,Cj0h9st1Que0naEhGC31Bg,,,N,0,0,,,2014-02-17 15:27,2014-03-01 17:08,admin,admin,
1723,128521,6764,35479,6640,0,N,N,N,CP_Drtn,TT_Task,DT_FixedDrtn,TK_NotStart,HHI.3022,Perform RT,,1630,0,10,0,0,0,10,0,0,0,,,,2014-11-08 16:00,2014-11-09 16:00,,2014-04-19 07:00,2014-04-19 17:00,2014-04-19 07:00,2014-04-19 17:00,2014-04-19 07:00,2014-04-19 17:00,2014-11-08 16:00,2014-11-09 16:00,,PT_Normal,,,,,GZFf12d9RzinXtqJQ8hxPQ,fblkQIEz9UaACAlKeVUFvg,,,N,0,0,,,2014-02-17 15:27,2014-03-01 17:08,admin,admin,
1724,128522,6764,35480,6640,0,N,N,N,CP_Drtn,TT_Task,DT_FixedDrtn,TK_NotStart,HHI.3102,Perform Final Inspection & Handover to CLient,,1630,0,10,0,0,0,10,0,0,0,,,,2015-02-04 16:00,2015-02-05 16:00,,2014-07-30 11:00,2014-07-31 11:00,2014-07-30 11:00,2014-07-31 11:00,2014-07-30 11:00,2014-07-31 11:00,2015-02-04 16:00,2015-02-05 16:00,,PT_Normal,,,,,0np1fAtaS12hGj7+60utoQ,SxrzYUiGSE62pBonO0Fv3A,,,N,0,0,,,2014-02-17 15:27,2014-03-01 17:08,admin,admin,
1725,128523,6764,35481,6640,0,N,N,N,CP_Drtn,TT_Task,DT_FixedDrtn,TK_NotStart,HHI.3103,AZ Handovers Area to Client,,1630,1630,10,0,0,0,10,0,0,0,,,,2015-02-05 16:00,2015-02-07 16:00,,2014-07-31 11:00,2014-08-01 13:30,2014-07-31 11:00,2014-08-01 13:30,2014-07-31 11:00,2014-08-01 13:30,2015-02-05 16:00,2015-02-07 16:00,,PT_Normal,,,,,bBUO2b+OSUOVw8ToS09Wbg,,,,N,0,0,,,2014-02-17 15:27,2014-03-01 17:08,admin,admin,
1726,141823,6971,39889,7842,100,N,N,N,CP_Phys,TT_Mile,DT_FixedDrtn,TK_Complete,CZA-PIM-1000,"Pre Inspection Meeting (SA, PSAL & AZ)",,,,0,0,0,0,0,0,0,0,,2013-12-05 07:00,2013-12-05 07:00,2014-11-09 13:00,2014-11-09 13:00,,2013-12-05 00:00,2013-12-05 00:00,,,2013-12-05 07:00,2013-12-05 07:00,,,,PT_Normal,,,,,2KBDXLvP4kORjDn22LygEA,,,,N,0,0,,,2014-04-13 07:21,2014-04-15 07:43,admin,admin,
1727,141824,6971,39934,7842,0,N,N,N,CP_Phys,TT_Task,DT_FixedDrtn,TK_NotStart,CZA-TK-0710-1860,"Filling,Holding and Transfering of Water",8375,1750,0,100,0,5200.764421,5200.764421,100,0,0,0,,,,2015-05-18 15:00,2015-05-30 15:00,,2014-10-26 15:00,2014-11-06 15:00,2014-10-26 15:00,2014-11-06 15:00,2014-10-26 15:00,2014-11-06 15:00,2015-05-18 15:00,2015-05-30 15:00,,PT_Normal,,,,,RUwCO2lTv0G4ivyVSMbNEA,,,,N,0,0,,,2014-04-13 07:21,2014-04-14 15:50,admin,admin,
1728,141825,6971,39953,7842,0,N,N,N,CP_Phys,TT_Mile,DT_FixedDrtn,TK_NotStart,CZA-TK-0710-1200,Foundation Takeover from Client,,0,0,0,0,0,0,0,0,0,0,2014-03-29 00:00,,,2014-03-27 17:00,2014-03-27 17:00,,2014-03-29 07:00,2014-03-29 07:00,2014-03-29 07:00,2014-03-29 07:00,2014-03-29 07:00,2014-03-29 07:00,2014-03-27 17:00,2014-03-27 17:00,CS_MSO,PT_Normal,,,,,8QsSbBfcSUW5/Mfo48juTA,,,,N,0,0,,,2014-04-13 07:21,2014-04-13 07:42,admin,admin,
1729,141826,6971,39936,7842,0,N,N,N,CP_Phys,TT_Task,DT_FixedDrtn,TK_NotStart,CZA-TK-0710-1870,"Blasting and Painting of Bottom, Shell and Roof (Inside and Outside)",8375,1750,0,180,0,3120.458652,3120.458652,180,0,0,0,,,,2015-05-30 15:00,2015-06-20 15:00,,2014-11-06 15:00,2014-11-27 15:00,2014-11-06 15:00,2014-11-27 15:00,2014-11-06 15:00,2014-11-27 15:00,2015-05-30 15:00,2015-06-20 15:00,,PT_Normal,,,,,c5gTGTQv2U2jUwNN0Z/0Rw,,,,N,0,0,,,2014-04-13 07:21,2014-04-14 15:50,admin,admin,
1730,141827,6971,40063,7842,0,N,N,N,CP_Phys,TT_Task,DT_FixedDrtn,TK_NotStart,CZA-TK-0710-1890,Tank Handover,8375,1750,918,20,0,1040.152884,1040.152884,20,0,0,0,,,,2015-06-25 15:00,2015-06-28 15:00,,2014-12-03 15:00,2014-12-06 15:00,2014-12-03 15:00,2014-12-06 15:00,2014-12-03 15:00,2014-12-06 15:00,2015-06-25 15:00,2015-06-28 15:00,,PT_Normal,,,,,nFJcvNqpH0iKV+6b0u/yLw,,,,N,0,0,,,2014-04-13 07:21,2014-04-14 15:50,admin,admin,
1731,141828,6971,40063,7842,0,N,N,N,CP_Phys,TT_Task,DT_FixedDrtn,TK_NotStart,CZA-TK-0710-1880,Tank Calibration,8375,1750,0,50,0,1040.152884,1040.152884,50,0,0,0,,,,2015-06-20 15:00,2015-06-25 15:00,,2014-11-27 15:00,2014-12-03 15:00,2014-11-27 15:00,2014-12-03 15:00,2014-11-27 15:00,2014-12-03 15:00,2015-06-20 15:00,2015-06-25 15:00,,PT_Normal,,,,,BZ4Aaot5hEGwcP9A4ldl/w,,,,N,0,0,,,2014-04-13 07:21,2014-04-14 15:50,admin,admin,
1732,141829,6971,40005,7842,0,N,N,N,CP_Phys,TT_Task,DT_FixedDrtn,TK_NotStart,CZA-TK-0710-1000,Cutting of Annular Plates,8480,3228,0,20,0,262.824,262.824,20,0,0,0,,,,2015-02-01 13:00,2015-02-03 13:00,,2014-01-20 15:00,2014-01-22 15:00,2014-01-20 15:00,2014-01-22 15:00,2014-01-20 15:00,2014-01-22 15:00,2015-02-01 13:00,2015-02-03 13:00,,PT_Normal,,,,,GYCM7Tc5UEKgux06ytzzpA,,,,N,0,0,,,2014-04-13 07:21,2014-04-14 17:03,admin,admin,
1733,141830,6971,40005,7842,0,N,N,N,CP_Phys,TT_Task,DT_FixedDrtn,TK_NotStart,CZA-TK-0710-1010,Cutting of Bottom Plates,8480,3580,0,20,0,705.291,705.291,20,0,0,0,,,,2015-03-14 15:00,2015-03-16 15:00,,2014-01-20 15:00,2014-01-22 15:00,2014-01-20 15:00,2014-01-22 15:00,2014-01-20 15:00,2014-01-22 15:00,2015-03-14 15:00,2015-03-16 15:00,,PT_Normal,,,,,S2wqRQqAskOGPfuASseGtQ,,,,N,0,0,,,2014-04-13 07:21,2014-04-14 17:03,admin,admin,
1734,141831,6971,40005,7842,0,N,N,N,CP_Phys,TT_Task,DT_FixedDrtn,TK_NotStart,CZA-TK-0710-1020,"Cutting, Beveling & Rolling Shell No.7",8480,3580,0,10,0,309.2355,309.2355,10,0,0,0,,,,2015-03-16 15:00,2015-03-17 15:00,,2014-01-22 15:00,2014-01-23 15:00,2014-01-22 15:00,2014-01-23 15:00,2014-01-22 15:00,2014-01-23 15:00,2015-03-16 15:00,2015-03-17 15:00,,PT_Normal,,,,,4rUFPu1kf0ibAdt9xE4PRA,,,,N,0,0,,,2014-04-13 07:21,2014-04-14 17:03,admin,admin,
1735,141832,6971,40005,7842,0,N,N,N,CP_Phys,TT_Task,DT_FixedDrtn,TK_NotStart,CZA-TK-0710-1030,"Cutting, Bevelling & Rolling Shell No.8",8480,3580,0,10,0,167.502,167.502,10,0,0,0,,,,2015-03-16 15:00,2015-03-17 15:00,,2014-01-22 15:00,2014-01-23 15:00,2014-01-22 15:00,2014-01-23 15:00,2014-01-22 15:00,2014-01-23 15:00,2015-03-16 15:00,2015-03-17 15:00,,PT_Normal,,,,,tW/ZT56dTkOaIJbqZKO52w,,,,N,0,0,,,2014-04-13 07:21,2014-04-14 17:03,admin,admin,
1736,141833,6971,40005,7842,0,N,N,N,CP_Phys,TT_Task,DT_FixedDrtn,TK_NotStart,CZA-TK-0710-1040,"Cutting, Fit-up and Welding of Stairway Platform, Gratings and Handrails (Upper Part)",8480,3580,0,70,0,0,0,70,0,0,0,,,,2015-03-17 15:00,2015-03-25 15:00,,2014-01-23 15:00,2014-02-01 15:00,2014-01-23 15:00,2014-02-01 15:00,2014-01-23 15:00,2014-02-01 15:00,2015-03-17 15:00,2015-03-25 15:00,,PT_Normal,,,,,UjkWTw4IGEGSh2seZZp6Cw,,,,N,0,0,,,2014-04-13 07:21,2014-04-14 17:03,admin,admin,
1737,141834,6971,40005,7842,0,N,N,N,CP_Phys,TT_Task,DT_FixedDrtn,TK_NotStart,CZA-TK-0710-1050,Cutting of Deck Plate,8480,3580,0,20,0,116.496,116.496,20,0,0,0,,,,2015-03-25 15:00,2015-03-28 15:00,,2014-02-01 15:00,2014-02-03 15:00,2014-02-01 15:00,2014-02-03 15:00,2014-02-01 15:00,2014-02-03 15:00,2015-03-25 15:00,2015-03-28 15:00,,PT_Normal,,,,,niXoMyD4WkWHFmTkmNBTrw,,,,N,0,0,,,2014-04-13 07:21,2014-04-14 17:03,admin,admin,
1738,141835,6971,40005,7842,0,N,N,N,CP_Phys,TT_Task,DT_FixedDrtn,TK_NotStart,CZA-TK-0710-1060,"Cutting of Pontoon, Legs and Other Appurtanances",8480,3580,0,70,0,920.343,920.343,70,0,0,0,,,,2015-03-28 15:00,2015-04-05 15:00,,2014-02-03 15:00,2014-02-11 15:00,2014-02-03 15:00,2014-02-11 15:00,2014-02-03 15:00,2014-02-11 15:00,2015-03-28 15:00,2015-04-05 15:00,,PT_Normal,,,,,nUJ81UMCYUGvmYvSZETX3Q,,,,N,0,0,,,2014-04-13 07:21,2014-04-14 17:03,admin,admin,
1739,141836,6971,40005,7842,0,N,N,N,CP_Phys,TT_Task,DT_FixedDrtn,TK_NotStart,CZA-TK-0710-1070,Cutting of Compression Ring,8480,3580,0,20,0,0,0,20,0,0,0,,,,2015-04-05 15:00,2015-04-07 15:00,,2014-02-11 15:00,2014-02-13 15:00,2014-02-11 15:00,2014-02-13 15:00,2014-02-11 15:00,2014-02-13 15:00,2015-04-05 15:00,2015-04-07 15:00,,PT_Normal,,,,,9RiVAP9Rlk+bELzDEvhXWQ,,,,N,0,0,,,2014-04-13 07:21,2014-04-14 17:03,admin,admin,
1740,141837,6971,40005,7842,0,N,N,N,CP_Phys,TT_Task,DT_FixedDrtn,TK_NotStart,CZA-TK-0710-1080,"Cutting, Fit-up and Welding of Roof Structure",8480,3580,0,50,0,893.088,893.088,50,0,0,0,,,,2015-04-07 15:00,2015-04-13 15:00,,2014-02-13 15:00,2014-02-19 15:00,2014-02-13 15:00,2014-02-19 15:00,2014-02-13 15:00,2014-02-19 15:00,2015-04-07 15:00,2015-04-13 15:00,,PT_Normal,,,,,48FsHe9oU0uPXoDUWwaFvw,,,,N,0,0,,,2014-04-13 07:21,2014-04-14 17:03,admin,admin,
1741,141838,6971,40005,7842,0,N,N,N,CP_Phys,TT_Task,DT_FixedDrtn,TK_NotStart,CZA-TK-0710-1090,Cutting of Roof Plates,8480,3580,0,10,0,0,0,10,0,0,0,,,,2015-04-13 15:00,2015-04-14 15:00,,2014-02-19 15:00,2014-02-20 15:00,2014-02-19 15:00,2014-02-20 15:00,2014-02-19 15:00,2014-02-20 15:00,2015-04-13 15:00,2015-04-14 15:00,,PT_Normal,,,,,P8JVa6SsLkKfdRL8tqQQtA,,,,N,0,0,,,2014-04-13 07:21,2014-04-14 17:03,admin,admin,
1742,141839,6971,40005,7842,0,N,N,N,CP_Phys,TT_Task,DT_FixedDrtn,TK_NotStart,CZA-TK-0710-1100,"Cutting of Roof Nozzles, Manholes and Other Appurtanances",8480,3580,0,50,0,0,0,50,0,0,0,,,,2015-04-13 15:00,2015-04-19 15:00,,2014-02-19 15:00,2014-02-25 15:00,2014-02-19 15:00,2014-02-25 15:00,2014-02-19 15:00,2014-02-25 15:00,2015-04-13 15:00,2015-04-19 15:00,,PT_Normal,,,,,97KCBo30Lk6PArEJr0/Thw,,,,N,0,0,,,2014-04-13 07:21,2014-04-14 17:03,admin,admin,
1743,141840,6971,40005,7842,0,N,N,N,CP_Phys,TT_Task,DT_FixedDrtn,TK_NotStart,CZA-TK-0710-1110,"Cutting, Fit-up and welding of Roof Platform, Gratings and Handrails",8480,3580,0,10,0,0,0,10,0,0,0,,,,2015-04-19 15:00,2015-04-20 15:00,,2014-02-25 15:00,2014-02-26 15:00,2014-02-25 15:00,2014-02-26 15:00,2014-02-25 15:00,2014-02-26 15:00,2015-04-19 15:00,2015-04-20 15:00,,PT_Normal,,,,,pkHY609MM0udqGyJlhFMsQ,,,,N,0,0,,,2014-04-13 07:21,2014-04-14 17:03,admin,admin,
1744,141841,6971,40005,7842,0,N,N,N,CP_Phys,TT_Task,DT_FixedDrtn,TK_NotStart,CZA-TK-0710-1120,"Cutting, Bevelling & Rolling of Shell No.7",8480,3580,0,10,0,309.2355,309.2355,10,0,0,0,,,,2015-04-19 15:00,2015-04-20 15:00,,2014-02-25 15:00,2014-02-26 15:00,2014-02-25 15:00,2014-02-26 15:00,2014-02-25 15:00,2014-02-26 15:00,2015-04-19 15:00,2015-04-20 15:00,,PT_Normal,,,,,stJCPJMfVESnp2r1A9N4AQ,,,,N,0,0,,,2014-04-13 07:21,2014-04-14 17:03,admin,admin,
1745,141842,6971,40005,7842,0,N,N,N,CP_Phys,TT_Task,DT_FixedDrtn,TK_NotStart,CZA-TK-0710-1140,"Cutting, Bevelling & Rolling of Shell No.5",8480,3580,0,10,0,360.7857,360.7857,10,0,0,0,,,,2015-04-21 15:00,2015-04-22 15:00,,2014-02-27 15:00,2014-03-01 15:00,2014-02-27 15:00,2014-03-01 15:00,2014-02-27 15:00,2014-03-01 15:00,2015-04-21 15:00,2015-04-22 15:00,,PT_Normal,,,,,G4SByPYIBkaC1n4aBM6UVg,,,,N,0,0,,,2014-04-13 07:21,2014-04-14 17:03,admin,admin,
1746,141843,6971,40005,7842,0,N,N,N,CP_Phys,TT_Task,DT_FixedDrtn,TK_NotStart,CZA-TK-0710-1150,"Cutting, Bevelling & Rolling of Shell No.4",8480,3580,0,10,0,412.3422,412.3422,10,0,0,0,,,,2015-04-22 15:00,2015-04-23 15:00,,2014-03-01 15:00,2014-03-02 15:00,2014-03-01 15:00,2014-03-02 15:00,2014-03-01 15:00,2014-03-02 15:00,2015-04-22 15:00,2015-04-23 15:00,,PT_Normal,,,,,+3Spi8/rJUSdKyqtUBDc/A,,,,N,0,0,,,2014-04-13 07:21,2014-04-14 17:03,admin,admin,
1747,141844,6971,40005,7842,0,N,N,N,CP_Phys,TT_Task,DT_FixedDrtn,TK_NotStart,CZA-TK-0710-1160,"Cutting, Bevelling & Rolling of Shell No.3",8480,3580,0,10,0,515.4678,515.4678,10,0,0,0,,,,2015-04-23 15:00,2015-04-25 15:00,,2014-03-02 15:00,2014-03-03 15:00,2014-03-02 15:00,2014-03-03 15:00,2014-03-02 15:00,2014-03-03 15:00,2015-04-23 15:00,2015-04-25 15:00,,PT_Normal,,,,,kCgbKoHqukmli5PB8v0Vbw,,,,N,0,0,,,2014-04-13 07:21,2014-04-14 17:03,admin,admin,
1748,141845,6971,40005,7842,0,N,N,N,CP_Phys,TT_Task,DT_FixedDrtn,TK_NotStart,CZA-TK-0710-1170,"Cutting, Bevelling & Rolling of Shell No.2",8480,3580,0,10,0,618.6,618.6,10,0,0,0,,,,2015-04-25 15:00,2015-04-26 15:00,,2014-03-03 15:00,2014-03-04 15:00,2014-03-03 15:00,2014-03-04 15:00,2014-03-03 15:00,2014-03-04 15:00,2015-04-25 15:00,2015-04-26 15:00,,PT_Normal,,,,,F/6HtnORh02blOP9E8eeyw,,,,N,0,0,,,2014-04-13 07:21,2014-04-14 17:03,admin,admin,
1749,141846,6971,40005,7842,0,N,N,N,CP_Phys,TT_Task,DT_FixedDrtn,TK_NotStart,CZA-TK-0710-1180,"Cutting, Bevelling & Rolling of Shell No.1",8480,3580,0,10,0,721.7484,721.7484,10,0,0,0,,,,2015-04-25 15:00,2015-04-26 15:00,,2014-03-03 15:00,2014-03-04 15:00,2014-03-03 15:00,2014-03-04 15:00,2014-03-03 15:00,2014-03-04 15:00,2015-04-25 15:00,2015-04-26 15:00,,PT_Normal,,,,,cZu19Wj7OUqz8M4cZNFpvQ,,,,N,0,0,,,2014-04-13 07:21,2014-04-14 17:03,admin,admin,
1750,141847,6971,40005,7842,0,N,N,N,CP_Phys,TT_Task,DT_FixedDrtn,TK_NotStart,CZA-TK-0710-1190,"Cutting, Fit-up and Welding of Shell Nozzles,Manholes and Other Appurtanances",8480,3580,0,50,0,0,0,50,0,0,0,,,,2015-04-26 15:00,2015-05-02 15:00,,2014-03-04 15:00,2014-03-10 15:00,2014-03-04 15:00,2014-03-10 15:00,2014-03-04 15:00,2014-03-10 15:00,2015-04-26 15:00,2015-05-02 15:00,,PT_Normal,,,,,6VSV2LE/DEOh8wBomiMTRA,,,,N,0,0,,,2014-04-13 07:21,2014-04-14 17:03,admin,admin,
1751,141848,6971,40005,7842,0,N,N,N,CP_Phys,TT_Task,DT_FixedDrtn,TK_NotStart,CZA-TK-0710-1130,"Cutting, Bevelling & Rolling of Shell No.6",8480,3580,0,10,0,309.2355,309.2355,10,0,0,0,,,,2015-04-20 15:00,2015-04-21 15:00,,2014-02-26 15:00,2014-02-27 15:00,2014-02-26 15:00,2014-02-27 15:00,2014-02-26 15:00,2014-02-27 15:00,2015-04-20 15:00,2015-04-21 15:00,,PT_Normal,,,,,LVy3xCAJz0+9v9cmUoXMpg,,,,N,0,0,,,2014-04-13 07:21,2014-04-14 17:03,admin,admin,
1752,141849,6971,40005,7842,0,N,N,N,CP_Phys,TT_Task,DT_FixedDrtn,TK_NotStart,CZA-TK-0710-1191,"Cutting, Fit-up and Welding of Stairway Platform, Gratings and Handrails (Lower Part)",8480,3580,1830,70,0,0,0,70,0,0,0,,,,2015-04-26 15:00,2015-05-04 15:00,,2014-03-04 15:00,2014-03-12 15:00,2014-03-04 15:00,2014-03-12 15:00,2014-03-04 15:00,2014-03-12 15:00,2015-04-26 15:00,2015-05-04 15:00,,PT_Normal,,,,,G+o9yleWnk2zQglV8TF3Vw,,,,N,0,0,,,2014-04-13 07:21,2014-04-14 17:03,admin,admin,
1753,141850,6971,40157,7842,0,N,N,N,CP_Phys,TT_Task,DT_FixedDrtn,TK_NotStart,CZA-TK-0710-1270,Erection and Fit-up,8375,1750,0,10,0,135.375504,135.375504,10,0,0,0,,,,2014-11-01 15:00,2014-11-02 15:00,,2014-04-10 15:00,2014-04-12 15:00,2014-04-10 15:00,2014-04-12 15:00,2014-04-10 15:00,2014-04-12 15:00,2014-11-01 15:00,2014-11-02 15:00,,PT_Normal,,,,,pItII24PY060snhgDdBLOQ,8dgk4SqYXk6RCJK69JLkgQ,,,N,0,0,,,2014-04-13 07:21,2014-04-14 15:50,admin,admin,
1754,141851,6971,40157,7842,0,N,N,N,CP_Phys,TT_Task,DT_FixedDrtn,TK_NotStart,CZA-TK-0710-1280,Welding,8375,1750,0,60,0,169.21938,169.21938,60,60,0,60,,,,2014-11-02 15:00,2014-11-09 15:00,,2014-04-12 15:00,2014-04-19 15:00,2014-04-12 15:00,2014-04-19 15:00,2014-04-12 15:00,2014-04-19 15:00,2014-11-02 15:00,2014-11-09 15:00,,PT_Normal,,,,,A2aIVxToY0anFmdhW3+BVw,Sdm7Euem70CsSI8Dj/7c5g,,,N,0,0,,,2014-04-13 07:21,2014-04-14 15:50,admin,admin,
1755,141852,6971,40157,7842,0,N,N,N,CP_Phys,TT_Task,DT_FixedDrtn,TK_NotStart,CZA-TK-0710-1290,Inspection,8375,1750,0,70,0,33.843876,33.843876,70,0,0,0,,,,2014-11-01 15:00,2014-11-09 15:00,,2014-04-10 15:00,2014-04-19 15:00,2014-04-10 15:00,2014-04-19 15:00,2014-04-10 15:00,2014-04-19 15:00,2014-11-01 15:00,2014-11-09 15:00,,PT_Normal,,,,,5nzi6d9tcUKxNhfSXp0fCQ,f+2UogfiQUalKgRpA33png,,,N,0,0,,,2014-04-13 07:21,2014-04-14 15:50,admin,admin,
1756,141853,6971,40137,7842,0,N,N,N,CP_Phys,TT_Task,DT_FixedDrtn,TK_NotStart,CZA-TK-0710-1310,Welding,8375,1750,0,60,0,91.66019,91.66019,60,60,0,60,,,,2014-11-10 15:00,2014-11-17 15:00,,2014-04-20 15:00,2014-04-27 15:00,2014-04-20 15:00,2014-04-27 15:00,2014-04-20 15:00,2014-04-27 15:00,2014-11-10 15:00,2014-11-17 15:00,,PT_Normal,,,,,7lloIA8Ve0miJ78N7ba63w,6SJl8/Kh8U2hgmRQNdr/lA,,,N,0,0,,,2014-04-13 07:21,2014-04-14 15:50,admin,admin,
1757,141854,6971,40137,7842,0,N,N,N,CP_Phys,TT_Task,DT_FixedDrtn,TK_NotStart,CZA-TK-0710-1320,Inspection,8375,1750,0,70,0,18.332038,18.332038,70,0,0,0,,,,2014-11-09 15:00,2014-11-17 15:00,,2014-04-19 15:00,2014-04-27 15:00,2014-04-19 15:00,2014-04-27 15:00,2014-04-19 15:00,2014-04-27 15:00,2014-11-09 15:00,2014-11-17 15:00,,PT_Normal,,,,,VeJh/VpfM0OipYMlr1E6hg,jfsTZH23f0ehksIpa62usg,,,N,0,0,,,2014-04-13 07:21,2014-04-14 15:50,admin,admin,
1758,141855,6971,40137,7842,0,N,N,N,CP_Phys,TT_Task,DT_FixedDrtn,TK_NotStart,CZA-TK-0710-1300,Erection and Fit-up,8375,1750,0,10,0,73.328152,73.328152,10,10,0,10,,,,2014-11-09 15:00,2014-11-10 15:00,,2014-04-19 15:00,2014-04-20 15:00,2014-04-19 15:00,2014-04-20 15:00,2014-04-19 15:00,2014-04-20 15:00,2014-11-09 15:00,2014-11-10 15:00,,PT_Normal,,,,,jj0e2zS2hE+g9pp5VYsEwQ,3rIQEhxlekiCLbOkV1AQXg,,,N,0,0,,,2014-04-13 07:21,2014-04-14 15:50,admin,admin,
1759,141856,6971,40135,7842,0,N,N,N,CP_Phys,TT_Task,DT_FixedDrtn,TK_NotStart,CZA-TK-0710-1330,"Cutting, Installation and Fit-up",8375,1750,0,20,0,0,0,20,20,0,20,,,,2014-11-17 15:00,2014-11-19 15:00,,2014-04-27 15:00,2014-04-29 15:00,2014-04-27 15:00,2014-04-29 15:00,2014-04-27 15:00,2014-04-29 15:00,2014-11-17 15:00,2014-11-19 15:00,,PT_Normal,,,,,7OXGaqCj4029ocvVBn6gug,+e825ARaKU+UuzHuqqZl/g,,,N,0,0,,,2014-04-13 07:21,2014-04-14 15:50,admin,admin,
1760,141857,6971,40135,7842,0,N,N,N,CP_Phys,TT_Task,DT_FixedDrtn,TK_NotStart,CZA-TK-0710-1340,Welding,8375,1750,0,30,0,0,0,30,30,0,30,,,,2014-11-19 15:00,2014-11-23 15:00,,2014-04-29 15:00,2014-05-03 15:00,2014-04-29 15:00,2014-05-03 15:00,2014-04-29 15:00,2014-05-03 15:00,2014-11-19 15:00,2014-11-23 15:00,,PT_Normal,,,,,/AQ/+bGynk2GqxwyvA4VBw,Uxpe1xvG6kmxZ3WA2rNdOA,,,N,0,0,,,2014-04-13 07:21,2014-04-14 15:50,admin,admin,
1761,141858,6971,40135,7842,0,N,N,N,CP_Phys,TT_Task,DT_FixedDrtn,TK_NotStart,CZA-TK-0710-1350,Inspection,8375,1750,0,50,0,0,0,50,0,0,0,,,,2014-11-17 15:00,2014-11-23 15:00,,2014-04-27 15:00,2014-05-03 15:00,2014-04-27 15:00,2014-05-03 15:00,2014-04-27 15:00,2014-05-03 15:00,2014-11-17 15:00,2014-11-23 15:00,,PT_Normal,,,,,92a6ltBMmEakuEglMohjGA,3bQGBtEAnUK1RIrGQknDrw,,,N,0,0,,,2014-04-13 07:21,2014-04-14 15:50,admin,admin,
1762,141859,6971,40146,7842,0,N,N,N,CP_Phys,TT_Task,DT_FixedDrtn,TK_NotStart,CZA-TK-0710-1510,Laying and Fit-up,8375,1750,0,30,0,0,0,30,30,0,30,,,,2015-01-26 15:00,2015-01-29 15:00,,2014-07-06 15:00,2014-07-09 15:00,2014-07-06 15:00,2014-07-09 15:00,2014-07-06 15:00,2014-07-09 15:00,2015-01-26 15:00,2015-01-29 15:00,,PT_Normal,,,,,odSi6lybWkyQKBW9Ru7Srw,oS+OJi0DGUeZimsiCUWifg,,,N,0,0,,,2014-04-13 07:21,2014-04-14 15:50,admin,admin,
1763,141860,6971,40146,7842,0,N,N,N,CP_Phys,TT_Task,DT_FixedDrtn,TK_NotStart,CZA-TK-0710-1520,Welding,8375,1750,0,60,0,0,0,60,60,0,60,,,,2015-01-29 15:00,2015-02-05 15:00,,2014-07-09 15:00,2014-07-16 15:00,2014-07-09 15:00,2014-07-16 15:00,2014-07-09 15:00,2014-07-16 15:00,2015-01-29 15:00,2015-02-05 15:00,,PT_Normal,,,,,1JldQrlF1k2NP9SAbqa3HQ,j+s8Zso9X0Kw7pajOV4CRg,,,N,0,0,,,2014-04-13 07:21,2014-04-14 15:50,admin,admin,
1764,141861,6971,40146,7842,0,N,N,N,CP_Phys,TT_Task,DT_FixedDrtn,TK_NotStart,CZA-TK-0710-1530,Inspection,8375,1750,0,90,0,0,0,90,0,0,0,,,,2015-01-26 15:00,2015-02-05 15:00,,2014-07-06 15:00,2014-07-16 15:00,2014-07-06 15:00,2014-07-16 15:00,2014-07-06 15:00,2014-07-16 15:00,2015-01-26 15:00,2015-02-05 15:00,,PT_Normal,,,,,5JQdmGfFRUeb6yp2rgxpBQ,2hROHFboAECg/KPVLL4KxQ,,,N,0,0,,,2014-04-13 07:21,2014-04-14 15:50,admin,admin,
1765,141862,6971,40133,7842,0,N,N,N,CP_Phys,TT_Task,DT_FixedDrtn,TK_NotStart,CZA-TK-0710-1540,"Cutting,lnstallation and Fit-up",8375,1750,0,30,0,0,0,30,30,0,30,,,,2015-02-05 15:00,2015-02-09 15:00,,2014-07-16 15:00,2014-07-20 15:00,2014-07-16 15:00,2014-07-20 15:00,2014-07-16 15:00,2014-07-20 15:00,2015-02-05 15:00,2015-02-09 15:00,,PT_Normal,,,,,1DZyB+0uUkKsE+sJJBlU+w,2xR9n4nlM062dMbuavsGNA,,,N,0,0,,,2014-04-13 07:21,2014-04-14 15:50,admin,admin,
1766,141863,6971,40133,7842,0,N,N,N,CP_Phys,TT_Task,DT_FixedDrtn,TK_NotStart,CZA-TK-0710-1550,Welding,8375,1750,0,60,0,0,0,60,60,0,60,,,,2015-02-09 15:00,2015-02-16 15:00,,2014-07-20 15:00,2014-07-27 15:00,2014-07-20 15:00,2014-07-27 15:00,2014-07-20 15:00,2014-07-27 15:00,2015-02-09 15:00,2015-02-16 15:00,,PT_Normal,,,,,XvgQCLlpmkK9gdRUSVjg7Q,tweg9y0iTk6dag6F844RfQ,,,N,0,0,,,2014-04-13 07:21,2014-04-14 15:50,admin,admin,
1767,141864,6971,40133,7842,0,N,N,N,CP_Phys,TT_Task,DT_FixedDrtn,TK_NotStart,CZA-TK-0710-1560,Inspection,8375,1750,0,90,0,0,0,90,0,0,0,,,,2015-02-05 15:00,2015-02-16 15:00,,2014-07-16 15:00,2014-07-27 15:00,2014-07-16 15:00,2014-07-27 15:00,2014-07-16 15:00,2014-07-27 15:00,2015-02-05 15:00,2015-02-16 15:00,,PT_Normal,,,,,AffqLQMWnUeQeXUhcdMR4g,UZkWxHaQEUSALhCiN1lvqw,,,N,0,0,,,2014-04-13 07:21,2014-04-14 15:50,admin,admin,
1768,141865,6971,40140,7842,0,N,N,N,CP_Phys,TT_Task,DT_FixedDrtn,TK_NotStart,CZA-TK-0710-1480,Laying and Fit-up,8375,1750,0,30,0,0,0,30,30,0,30,,,,2015-01-14 15:00,2015-01-18 15:00,,2014-06-24 15:00,2014-06-28 15:00,2014-06-24 15:00,2014-06-28 15:00,2014-06-24 15:00,2014-06-28 15:00,2015-01-14 15:00,2015-01-18 15:00,,PT_Normal,,,,,6KNR9jxWMEyZpjV9oZx6nA,r3GNv2I/qEyJBVaOTCbHkg,,,N,0,0,,,2014-04-13 07:21,2014-04-14 15:50,admin,admin,
1769,141866,6971,40140,7842,0,N,N,N,CP_Phys,TT_Task,DT_FixedDrtn,TK_NotStart,CZA-TK-0710-1490,Welding,8375,1750,0,70,0,0,0,70,70,0,70,,,,2015-01-18 15:00,2015-01-26 15:00,,2014-06-28 15:00,2014-07-06 15:00,2014-06-28 15:00,2014-07-06 15:00,2014-06-28 15:00,2014-07-06 15:00,2015-01-18 15:00,2015-01-26 15:00,,PT_Normal,,,,,IMuZJcsEsUGx9XomTHLotw,NEGqw/E8rkGmPRb5arz2Gg,,,N,0,0,,,2014-04-13 07:21,2014-04-14 15:50,admin,admin,
1770,141867,6971,40140,7842,0,N,N,N,CP_Phys,TT_Task,DT_FixedDrtn,TK_NotStart,CZA-TK-0710-1500,Inspection,8375,1750,0,100,0,0,0,100,0,0,0,,,,2015-01-14 15:00,2015-01-26 15:00,,2014-06-24 15:00,2014-07-06 15:00,2014-06-24 15:00,2014-07-06 15:00,2014-06-24 15:00,2014-07-06 15:00,2015-01-14 15:00,2015-01-26 15:00,,PT_Normal,,,,,92ydrz+eaEWELeOUF+P5RQ,7YFvv/IrdEurjRvbYkqRVA,,,N,0,0,,,2014-04-13 07:21,2014-04-14 15:50,admin,admin,
1771,141868,6971,40138,7842,0,N,N,N,CP_Phys,TT_Task,DT_FixedDrtn,TK_NotStart,CZA-TK-0710-1570,Erection and Fit-up,8375,1750,0,50,0,0,0,50,50,0,50,,,,2015-02-16 15:00,2015-02-22 15:00,,2014-07-27 15:00,2014-08-02 15:00,2014-07-27 15:00,2014-08-02 15:00,2014-07-27 15:00,2014-08-02 15:00,2015-02-16 15:00,2015-02-22 15:00,,PT_Normal,,,,,hxg1qBVJo0G0Nd+02be1NQ,ZokLDo6/G0Wzjc9CvdEWfQ,,,N,0,0,,,2014-04-13 07:21,2014-04-14 15:50,admin,admin,
1772,141869,6971,40138,7842,0,N,N,N,CP_Phys,TT_Task,DT_FixedDrtn,TK_NotStart,CZA-TK-0710-1580,Welding,8375,1750,0,120,0,0,0,120,120,0,120,,,,2015-02-22 15:00,2015-03-08 15:00,,2014-08-02 15:00,2014-08-16 15:00,2014-08-02 15:00,2014-08-16 15:00,2014-08-02 15:00,2014-08-16 15:00,2015-02-22 15:00,2015-03-08 15:00,,PT_Normal,,,,,XlfFxl6rAkSp82cXq9+J3w,XpE5nGyzxEOkLPjH2E2jsQ,,,N,0,0,,,2014-04-13 07:21,2014-04-14 15:50,admin,admin,
1773,141870,6971,40138,7842,0,N,N,N,CP_Phys,TT_Task,DT_FixedDrtn,TK_NotStart,CZA-TK-0710-1590,Inspection,8375,1750,0,150,0,0,0,150,0,0,0,,,,2015-02-18 15:00,2015-03-08 15:00,,2014-07-29 15:00,2014-08-16 15:00,2014-07-29 15:00,2014-08-16 15:00,2014-07-29 15:00,2014-08-16 15:00,2015-02-18 15:00,2015-03-08 15:00,,PT_Normal,,,,,jg938R6HbUa8UwO1P4pqjQ,BPOVe0A5RkC9raWx+Te4VA,,,N,0,0,,,2014-04-13 07:21,2014-04-14 15:50,admin,admin,
1774,141871,6971,40155,7842,0,N,N,N,CP_Phys,TT_Task,DT_FixedDrtn,TK_NotStart,CZA-TK-0710-1630,"Jacking,Erection and Fit-up",8375,1750,0,10,0,157.942881,157.942881,10,0,0,0,,,,2015-03-16 15:00,2015-03-17 15:00,,2014-08-24 15:00,2014-08-25 15:00,2014-08-24 15:00,2014-08-25 15:00,2014-08-24 15:00,2014-08-25 15:00,2015-03-16 15:00,2015-03-17 15:00,,PT_Normal,,,,,10cuKmfdiUOTcqpzEC0SUw,nLbGG+qwMkmr4cvtb68bgA,,,N,0,0,,,2014-04-13 07:21,2014-04-14 15:50,admin,admin,
1775,141872,6971,40155,7842,0,N,N,N,CP_Phys,TT_Task,DT_FixedDrtn,TK_NotStart,CZA-TK-0710-1640,Welding,8375,1750,0,60,0,197.428602,197.428602,60,60,0,60,,,,2015-03-17 15:00,2015-03-24 15:00,,2014-08-25 15:00,2014-09-01 15:00,2014-08-25 15:00,2014-09-01 15:00,2014-08-25 15:00,2014-09-01 15:00,2015-03-17 15:00,2015-03-24 15:00,,PT_Normal,,,,,JqGm9qP5t0K6w8+QVNXrSw,3TPI+QYiEUGgtShmybbdOw,,,N,0,0,,,2014-04-13 07:21,2014-04-14 15:50,admin,admin,
1776,141873,6971,40155,7842,0,N,N,N,CP_Phys,TT_Task,DT_FixedDrtn,TK_NotStart,CZA-TK-0710-1650,Inspection,8375,1750,0,70,0,39.48572,39.48572,70,0,0,0,,,,2015-03-16 15:00,2015-03-24 15:00,,2014-08-24 15:00,2014-09-01 15:00,2014-08-24 15:00,2014-09-01 15:00,2014-08-24 15:00,2014-09-01 15:00,2015-03-16 15:00,2015-03-24 15:00,,PT_Normal,,,,,Z7Mc7zkwhEylqhlD3lh6bg,QYGlpj/sd0Kc3dOYy4ob8g,,,N,0,0,,,2014-04-13 07:21,2014-04-14 15:50,admin,admin,
1777,141874,6971,40156,7842,0,N,N,N,CP_Phys,TT_Task,DT_FixedDrtn,TK_NotStart,CZA-TK-0710-1690,"Jacking, Erection and Fit-up",8375,1750,0,10,0,225.658804,225.658804,10,0,0,0,,,,2015-04-01 15:00,2015-04-02 15:00,,2014-09-09 15:00,2014-09-10 15:00,2014-09-09 15:00,2014-09-10 15:00,2014-09-09 15:00,2014-09-10 15:00,2015-04-01 15:00,2015-04-02 15:00,,PT_Normal,,,,,SBbOo8xk5kCeIX9jgwuLzg,fCXbAxxmvUGiQ01sUt3dpA,,,N,0,0,,,2014-04-13 07:21,2014-04-14 15:50,admin,admin,
1778,141875,6971,40156,7842,0,N,N,N,CP_Phys,TT_Task,DT_FixedDrtn,TK_NotStart,CZA-TK-0710-1700,Welding,8375,1750,0,60,0,282.073505,282.073505,60,60,0,60,,,,2015-04-02 15:00,2015-04-09 15:00,,2014-09-10 15:00,2014-09-17 15:00,2014-09-10 15:00,2014-09-17 15:00,2014-09-10 15:00,2014-09-17 15:00,2015-04-02 15:00,2015-04-09 15:00,,PT_Normal,,,,,8fALrvFkAUynsldoX11BdQ,iZ/ZtjXd8EKYmA6MrnIxDA,,,N,0,0,,,2014-04-13 07:21,2014-04-14 15:50,admin,admin,
1779,141876,6971,40156,7842,0,N,N,N,CP_Phys,TT_Task,DT_FixedDrtn,TK_NotStart,CZA-TK-0710-1710,Inspection,8375,1750,0,70,0,56.414701,56.414701,70,0,0,0,,,,2015-04-01 15:00,2015-04-09 15:00,,2014-09-09 15:00,2014-09-17 15:00,2014-09-09 15:00,2014-09-17 15:00,2014-09-09 15:00,2014-09-17 15:00,2015-04-01 15:00,2015-04-09 15:00,,PT_Normal,,,,,bgP/btcoAky8Hvg2GHgyPA,HWzdzrB1bUOklJQzNYmTyg,,,N,0,0,,,2014-04-13 07:21,2014-04-14 15:50,admin,admin,
1780,141877,6971,40225,7842,0,N,N,N,CP_Phys,TT_Task,DT_FixedDrtn,TK_NotStart,CZA-TK-0710-1660,"Jacking,Erection and Fit-up",8375,1750,0,10,0,180.513017,180.513017,10,10,0,10,,,,2015-03-24 15:00,2015-03-25 15:00,,2014-09-01 15:00,2014-09-02 15:00,2014-09-01 15:00,2014-09-02 15:00,2014-09-01 15:00,2014-09-02 15:00,2015-03-24 15:00,2015-03-25 15:00,,PT_Normal,,,,,isTUzBK98EiM49QfeXFfSw,CEdBXTMM4UaucEDQRiiK3A,,,N,0,0,,,2014-04-13 07:21,2014-04-14 15:50,admin,admin,
1781,141878,6971,40225,7842,0,N,N,N,CP_Phys,TT_Task,DT_FixedDrtn,TK_NotStart,CZA-TK-0710-1670,Welding,8375,1750,0,60,0,225.641271,225.641271,60,60,0,60,,,,2015-03-25 15:00,2015-04-01 15:00,,2014-09-02 15:00,2014-09-09 15:00,2014-09-02 15:00,2014-09-09 15:00,2014-09-02 15:00,2014-09-09 15:00,2015-03-25 15:00,2015-04-01 15:00,,PT_Normal,,,,,pz5hTUQpHE60xJCqhiN76A,5Riq1oFX1kWPRDEXWNxfJg,,,N,0,0,,,2014-04-13 07:21,2014-04-14 15:50,admin,admin,
1782,141879,6971,40225,7842,0,N,N,N,CP_Phys,TT_Task,DT_FixedDrtn,TK_NotStart,CZA-TK-0710-1680,Inspection,8375,1750,0,70,0,45.128254,45.128254,70,0,0,0,,,,2015-03-24 15:00,2015-04-01 15:00,,2014-09-01 15:00,2014-09-09 15:00,2014-09-01 15:00,2014-09-09 15:00,2014-09-01 15:00,2014-09-09 15:00,2015-03-24 15:00,2015-04-01 15:00,,PT_Normal,,,,,VjENettl+UaqVlkHc5+t6Q,6KISZR25ekCMHSgx0gK2nA,,,N,0,0,,,2014-04-13 07:21,2014-04-14 15:50,admin,admin,
1783,141880,6971,40326,7842,0,N,N,N,CP_Phys,TT_Task,DT_FixedDrtn,TK_NotStart,CZA-TK-0710-1840,Installation of Primary and Secondary Seal,8375,1750,0,40,0,0,0,40,0,0,0,,,,2015-05-12 15:00,2015-05-17 15:00,,2014-10-20 15:00,2014-10-25 15:00,2014-10-20 15:00,2014-10-25 15:00,2014-10-20 15:00,2014-10-25 15:00,2015-05-12 15:00,2015-05-17 15:00,,PT_Normal,,,,,GlMQW8wE5kWA55l4Ji5g3A,pR4jTPCaiEiQ7y97PB15mQ,,,N,0,0,,,2014-04-13 07:21,2014-04-14 15:50,admin,admin,
1784,141881,6971,40326,7842,0,N,N,N,CP_Phys,TT_Task,DT_FixedDrtn,TK_NotStart,CZA-TK-0710-1850,Inspection,8375,1750,0,10,0,0,0,10,0,0,0,,,,2015-05-17 15:00,2015-05-18 15:00,,2014-10-25 15:00,2014-10-26 15:00,2014-10-25 15:00,2014-10-26 15:00,2014-10-25 15:00,2014-10-26 15:00,2015-05-17 15:00,2015-05-18 15:00,,PT_Normal,,,,,/NDUznL4wkaoeTLGf8OlXg,VpmlM+Ida0WZuylfbdjC7A,,,N,0,0,,,2014-04-13 07:21,2014-04-14 15:50,admin,admin,
1785,141882,6971,40536,7842,0,N,N,N,CP_Phys,TT_Task,DT_FixedDrtn,TK_NotStart,CZA-TK-0710-1720,"Jacking, Erection and Fit-up",8375,1750,0,10,0,270.807481,270.807481,10,10,0,10,,,,2015-04-09 15:00,2015-04-11 15:00,,2014-09-17 15:00,2014-09-18 15:00,2014-09-17 15:00,2014-09-18 15:00,2014-09-17 15:00,2014-09-18 15:00,2015-04-09 15:00,2015-04-11 15:00,,PT_Normal,,,,,CFkO8YdiQ0uYO8hYV5z/bg,1pXe6gvzU0i5lAYKpLeD0w,,,N,0,0,,,2014-04-13 07:21,2014-04-14 15:50,admin,admin,
1786,141883,6971,40536,7842,0,N,N,N,CP_Phys,TT_Task,DT_FixedDrtn,TK_NotStart,CZA-TK-0710-1730,Welding,8375,1750,0,60,0,338.509351,338.509351,60,60,0,60,,,,2015-04-11 15:00,2015-04-18 15:00,,2014-09-18 15:00,2014-09-25 15:00,2014-09-18 15:00,2014-09-25 15:00,2014-09-18 15:00,2014-09-25 15:00,2015-04-11 15:00,2015-04-18 15:00,,PT_Normal,,,,,xfDbesBba0S8Y5ib/TE2qw,7Yo4SoVkv063PiKaliYYUg,,,N,0,0,,,2014-04-13 07:21,2014-04-14 15:50,admin,admin,
1787,141884,6971,40536,7842,0,N,N,N,CP_Phys,TT_Task,DT_FixedDrtn,TK_NotStart,CZA-TK-0710-1740,Inspection,8375,1750,0,70,0,67.70187,67.70187,70,0,0,0,,,,2015-04-09 15:00,2015-04-18 15:00,,2014-09-17 15:00,2014-09-25 15:00,2014-09-17 15:00,2014-09-25 15:00,2014-09-17 15:00,2014-09-25 15:00,2015-04-09 15:00,2015-04-18 15:00,,PT_Normal,,,,,jiWq/RaDHUq554j88xVe7g,y7m04reAH0ekDG2VRosC2w,,,N,0,0,,,2014-04-13 07:21,2014-04-14 15:50,admin,admin,
1788,141885,6971,40537,7842,0,N,N,N,CP_Phys,TT_Task,DT_FixedDrtn,TK_NotStart,CZA-TK-0710-1600,"Jacking, Erection and Fit-up",8375,1750,0,10,0,135.375504,135.375504,10,10,0,10,,,,2015-03-08 15:00,2015-03-09 15:00,,2014-08-16 15:00,2014-08-17 15:00,2014-08-16 15:00,2014-08-17 15:00,2014-08-16 15:00,2014-08-17 15:00,2015-03-08 15:00,2015-03-09 15:00,,PT_Normal,,,,,5OZbq4oNpEilAxCscHIgRQ,UINmdKdn90S+cZImUyli+w,,,N,0,0,,,2014-04-13 07:21,2014-04-14 15:50,admin,admin,
1789,141886,6971,40537,7842,0,N,N,N,CP_Phys,TT_Task,DT_FixedDrtn,TK_NotStart,CZA-TK-0710-1610,Welding,8375,1750,0,60,0,169.21938,169.21938,60,60,0,60,,,,2015-03-09 15:00,2015-03-16 15:00,,2014-08-17 15:00,2014-08-24 15:00,2014-08-17 15:00,2014-08-24 15:00,2014-08-17 15:00,2014-08-24 15:00,2015-03-09 15:00,2015-03-16 15:00,,PT_Normal,,,,,YRu7s61HZ0Ghx957Z7qerg,aPjlkcEddESC+cIOeG3RnA,,,N,0,0,,,2014-04-13 07:21,2014-04-14 15:50,admin,admin,
1790,141887,6971,40537,7842,0,N,N,N,CP_Phys,TT_Task,DT_FixedDrtn,TK_NotStart,CZA-TK-0710-1620,Inspection,8375,1750,0,70,0,33.843876,33.843876,70,0,0,0,,,,2015-03-08 15:00,2015-03-16 15:00,,2014-08-16 15:00,2014-08-24 15:00,2014-08-16 15:00,2014-08-24 15:00,2014-08-16 15:00,2014-08-24 15:00,2015-03-08 15:00,2015-03-16 15:00,,PT_Normal,,,,,2e+iuO9VSEmG7j/dZo8c6w,t39e8WmBaUawwtFNOSsSNg,,,N,0,0,,,2014-04-13 07:21,2014-04-14 15:50,admin,admin,
1791,141888,6971,40538,7842,0,N,N,N,CP_Phys,TT_Task,DT_FixedDrtn,TK_NotStart,CZA-TK-0710-1450,Erection and Fit-up,8375,1750,0,30,0,390.971405,390.971405,30,30,0,30,,,,2015-01-03 15:00,2015-01-06 15:00,,2014-06-12 15:00,2014-06-16 15:00,2014-06-12 15:00,2014-06-16 15:00,2014-06-12 15:00,2014-06-16 15:00,2015-01-03 15:00,2015-01-06 15:00,,PT_Normal,,,,,4S33ozC2zkGdK0MbGQ2+3Q,9RlcQt6JZkSYN19U9hLZug,,,N,0,0,,,2014-04-13 07:21,2014-04-14 15:50,admin,admin,
1792,141889,6971,40538,7842,0,N,N,N,CP_Phys,TT_Task,DT_FixedDrtn,TK_NotStart,CZA-TK-0710-1460,Welding,8375,1750,0,70,0,488.714257,488.714257,70,70,0,70,,,,2015-01-06 15:00,2015-01-14 15:00,,2014-06-16 15:00,2014-06-24 15:00,2014-06-16 15:00,2014-06-24 15:00,2014-06-16 15:00,2014-06-24 15:00,2015-01-06 15:00,2015-01-14 15:00,,PT_Normal,,,,,tZ4xeEO640m+qKdWNhZdAg,cLB7G3BNwkOxp8sH3Mg7LQ,,,N,0,0,,,2014-04-13 07:21,2014-04-14 15:50,admin,admin,
1793,141890,6971,40538,7842,0,N,N,N,CP_Phys,TT_Task,DT_FixedDrtn,TK_NotStart,CZA-TK-0710-1470,Inspection,8375,1750,0,100,0,97.742851,97.742851,100,0,0,0,,,,2015-01-03 15:00,2015-01-14 15:00,,2014-06-12 15:00,2014-06-24 15:00,2014-06-12 15:00,2014-06-24 15:00,2014-06-12 15:00,2014-06-24 15:00,2015-01-03 15:00,2015-01-14 15:00,,PT_Normal,,,,,h+YfWP4I1kaWz5EsTBUCog,aiuSGsLKpkmT5nuBsIzClw,,,N,0,0,,,2014-04-13 07:21,2014-04-14 15:50,admin,admin,
1794,141891,6971,40330,7842,0,N,N,N,CP_Phys,TT_Task,DT_FixedDrtn,TK_NotStart,CZA-TK-0710-1210,Laying and Fit-up,8375,1750,0,10,0,115.05772,115.05772,10,10,0,10,,,,2014-10-19 15:00,2014-10-20 15:00,,2014-03-29 15:00,2014-03-30 15:00,2014-03-29 15:00,2014-03-30 15:00,2014-03-29 15:00,2014-03-30 15:00,2014-10-19 15:00,2014-10-20 15:00,,PT_Normal,,,,,JxgUeYoLa06dUeDXSwXHhg,6QU++iAk3EKiq7c/3C9KtA,,,N,0,0,,,2014-04-13 07:21,2014-04-14 15:50,admin,admin,
1795,141892,6971,40330,7842,0,N,N,N,CP_Phys,TT_Task,DT_FixedDrtn,TK_NotStart,CZA-TK-0710-1220,Welding,8375,1750,0,30,0,143.822149,143.822149,30,30,0,30,,,,2014-10-20 15:00,2014-10-23 15:00,,2014-03-30 15:00,2014-04-02 15:00,2014-03-30 15:00,2014-04-02 15:00,2014-03-30 15:00,2014-04-02 15:00,2014-10-20 15:00,2014-10-23 15:00,,PT_Normal,,,,,knhnEVfhIUOt68MqdcUQEw,YckaC1s6nkq95nfk0+vlPA,,,N,0,0,,,2014-04-13 07:21,2014-04-14 15:50,admin,admin,
1796,141893,6971,40330,7842,0,N,N,N,CP_Phys,TT_Task,DT_FixedDrtn,TK_NotStart,CZA-TK-0710-1230,Inspection,8375,1750,0,40,0,28.76443,28.76443,40,0,0,0,,,,2014-10-19 15:00,2014-10-23 15:00,,2014-03-29 15:00,2014-04-02 15:00,2014-03-29 15:00,2014-04-02 15:00,2014-03-29 15:00,2014-04-02 15:00,2014-10-19 15:00,2014-10-23 15:00,,PT_Normal,,,,,N28qXH5BHU28tUSL3zHxOg,OaHUGMl8ekqKU+qKw93fDQ,,,N,0,0,,,2014-04-13 07:21,2014-04-14 15:50,admin,admin,
1797,141894,6971,40331,7842,0,N,N,N,CP_Phys,TT_Task,DT_FixedDrtn,TK_NotStart,CZA-TK-0710-1360,Erection and Fit-up,8375,1750,0,20,0,0,0,20,20,0,20,,,,2014-11-23 15:00,2014-11-25 15:00,,2014-05-03 15:00,2014-05-05 15:00,2014-05-03 15:00,2014-05-05 15:00,2014-05-03 15:00,2014-05-05 15:00,2014-11-23 15:00,2014-11-25 15:00,,PT_Normal,,,,,0JJ+EVJSckGxBuuIqF3N4Q,3GcoQCe6t0e2tQmxS8iOTA,,,N,0,0,,,2014-04-13 07:21,2014-04-14 15:50,admin,admin,
1798,141895,6971,40331,7842,0,N,N,N,CP_Phys,TT_Task,DT_FixedDrtn,TK_NotStart,CZA-TK-0710-1370,Welding,8375,1750,0,60,0,0,0,60,60,0,60,,,,2014-11-25 15:00,2014-12-02 15:00,,2014-05-05 15:00,2014-05-12 15:00,2014-05-05 15:00,2014-05-12 15:00,2014-05-05 15:00,2014-05-12 15:00,2014-11-25 15:00,2014-12-02 15:00,,PT_Normal,,,,,kpOOuaDg+0ypM8GkvVkyqQ,ZIPr/b4nzUCrpciL5iitGQ,,,N,0,0,,,2014-04-13 07:21,2014-04-14 15:50,admin,admin,
1799,141896,6971,40331,7842,0,N,N,N,CP_Phys,TT_Task,DT_FixedDrtn,TK_NotStart,CZA-TK-0710-1380,Inspection,8375,1750,0,80,0,0,0,80,0,0,0,,,,2014-11-23 15:00,2014-12-02 15:00,,2014-05-03 15:00,2014-05-12 15:00,2014-05-03 15:00,2014-05-12 15:00,2014-05-03 15:00,2014-05-12 15:00,2014-11-23 15:00,2014-12-02 15:00,,PT_Normal,,,,,r+9Hsyet40q9z57Fsj8HWw,DUAr4dsO5kKeGyFballe6Q,,,N,0,0,,,2014-04-13 07:21,2014-04-14 15:50,admin,admin,
1800,141897,6971,40332,7842,0,N,N,N,CP_Phys,TT_Task,DT_FixedDrtn,TK_NotStart,CZA-TK-0710-1390,Laying and Fit-up,8375,1750,0,30,0,50.999011,50.999011,30,30,0,30,,,,2014-12-02 15:00,2014-12-06 15:00,,2014-05-12 15:00,2014-05-15 15:00,2014-05-12 15:00,2014-05-15 15:00,2014-05-12 15:00,2014-05-15 15:00,2014-12-02 15:00,2014-12-06 15:00,,PT_Normal,,,,,AzGIMAPpz0S5Lim2nn+Xzw,UlwvNwr1iESh1gVQo6Pvrw,,,N,0,0,,,2014-04-13 07:21,2014-04-14 15:50,admin,admin,
1801,141898,6971,40332,7842,0,N,N,N,CP_Phys,TT_Task,DT_FixedDrtn,TK_NotStart,CZA-TK-0710-1400,Welding,8375,1750,0,100,0,63.748764,63.748764,100,100,0,100,,,,2014-12-06 15:00,2014-12-17 15:00,,2014-05-15 15:00,2014-05-27 15:00,2014-05-15 15:00,2014-05-27 15:00,2014-05-15 15:00,2014-05-27 15:00,2014-12-06 15:00,2014-12-17 15:00,,PT_Normal,,,,,viR+v34aNESNH3gy+qIojQ,cpLKoxO8V0Ko1cwM5OV6EA,,,N,0,0,,,2014-04-13 07:21,2014-04-14 15:50,admin,admin,
1802,141899,6971,40332,7842,0,N,N,N,CP_Phys,TT_Task,DT_FixedDrtn,TK_NotStart,CZA-TK-0710-1410,Inspection,8375,1750,0,130,0,12.749753,12.749753,130,0,0,0,,,,2014-12-02 15:00,2014-12-17 15:00,,2014-05-12 15:00,2014-05-27 15:00,2014-05-12 15:00,2014-05-27 15:00,2014-05-12 15:00,2014-05-27 15:00,2014-12-02 15:00,2014-12-17 15:00,,PT_Normal,,,,,PboD+g83aU6B56iB/9ZxYQ,s35PYhcJREKrHBeSblEE9g,,,N,0,0,,,2014-04-13 07:21,2014-04-14 15:50,admin,admin,
1803,141900,6971,40333,7842,0,N,N,N,CP_Phys,TT_Task,DT_FixedDrtn,TK_NotStart,CZA-TK-0710-1420,"Laying, Cutting all Holes and Fit-up",8375,1750,0,40,0,402.902957,402.902957,40,40,0,40,,,,2014-12-17 15:00,2014-12-22 15:00,,2014-05-27 15:00,2014-06-01 15:00,2014-05-27 15:00,2014-06-01 15:00,2014-05-27 15:00,2014-06-01 15:00,2014-12-17 15:00,2014-12-22 15:00,,PT_Normal,,,,,brC7R+xyakqMItV5fBe5+A,uuY73ZQtnUaS5QoSPACN3Q,,,N,0,0,,,2014-04-13 07:21,2014-04-14 15:50,admin,admin,
1804,141901,6971,40333,7842,0,N,N,N,CP_Phys,TT_Task,DT_FixedDrtn,TK_NotStart,CZA-TK-0710-1430,Welding,8375,1790,40,100,0,503.628696,503.628696,100,100,0,100,,,,2014-12-22 15:00,2015-01-03 15:00,,2014-05-27 15:00,2014-06-08 15:00,2014-05-27 15:00,2014-06-08 15:00,2014-05-27 15:00,2014-06-08 15:00,2014-12-22 15:00,2015-01-03 15:00,,PT_Normal,,,,,hIYQlMPdi0ucBSnzeyrdcQ,2cw1zadqqkK1H9DZqy8Dfw,,,N,0,0,,,2014-04-13 07:21,2014-04-14 15:50,admin,admin,
1805,141902,6971,40333,7842,0,N,N,N,CP_Phys,TT_Task,DT_FixedDrtn,TK_NotStart,CZA-TK-0710-1440,Inspection,8375,1750,0,140,0,100.725739,100.725739,140,0,0,0,,,,2014-12-17 15:00,2015-01-03 15:00,,2014-05-27 15:00,2014-06-12 15:00,2014-05-27 15:00,2014-06-12 15:00,2014-05-27 15:00,2014-06-12 15:00,2014-12-17 15:00,2015-01-03 15:00,,PT_Normal,,,,,VyuVY878YkWATyPJjc3Hfg,VGBoocETdU2dXrMLgFX04g,,,N,0,0,,,2014-04-13 07:21,2014-04-14 15:50,admin,admin,
1806,141903,6971,40543,7842,0,N,N,N,CP_Phys,TT_Task,DT_FixedDrtn,TK_NotStart,CZA-TK-0710-1750,"Jacking, Erection and Fit-up",8375,1750,0,10,0,315.963249,315.963249,10,10,0,10,,,,2015-04-18 15:00,2015-04-19 15:00,,2014-09-25 15:00,2014-09-27 15:00,2014-09-25 15:00,2014-09-27 15:00,2014-09-25 15:00,2014-09-27 15:00,2015-04-18 15:00,2015-04-19 15:00,,PT_Normal,,,,,Nzt3/heQC06F98lOWjWRaw,bF2aVQhj8ESjAFYrEPRpYQ,,,N,0,0,,,2014-04-13 07:21,2014-04-14 15:50,admin,admin,
1807,141904,6971,40543,7842,0,N,N,N,CP_Phys,TT_Task,DT_FixedDrtn,TK_NotStart,CZA-TK-0710-1760,Welding,8375,1750,0,60,0,394.954061,394.954061,60,60,0,60,,,,2015-04-19 15:00,2015-04-26 15:00,,2014-09-27 15:00,2014-10-04 15:00,2014-09-27 15:00,2014-10-04 15:00,2014-09-27 15:00,2014-10-04 15:00,2015-04-19 15:00,2015-04-26 15:00,,PT_Normal,,,,,82c2X5Swck+lvXPlp3stKw,JaZnFipIh0Kqh1ugwrdWOA,,,N,0,0,,,2014-04-13 07:21,2014-04-14 15:50,admin,admin,
1808,141905,6971,40543,7842,0,N,N,N,CP_Phys,TT_Task,DT_FixedDrtn,TK_NotStart,CZA-TK-0710-1770,Inspection,8375,1750,0,70,0,78.990812,78.990812,70,0,0,0,,,,2015-04-18 15:00,2015-04-26 15:00,,2014-09-25 15:00,2014-10-04 15:00,2014-09-25 15:00,2014-10-04 15:00,2014-09-25 15:00,2014-10-04 15:00,2015-04-18 15:00,2015-04-26 15:00,,PT_Normal,,,,,hJmLlj+BC0yKLHhlTkRC1g,VlkJrZ25yE6d70sz5kOJ7w,,,N,0,0,,,2014-04-13 07:21,2014-04-14 15:50,admin,admin,
1809,141906,6971,40335,7842,0,N,N,N,CP_Phys,TT_Task,DT_FixedDrtn,TK_NotStart,CZA-TK-0710-1780,"Lay-out, Cutting, and Fit-up",8375,1750,0,20,0,0,0,20,20,0,20,,,,2015-04-26 15:00,2015-04-28 15:00,,2014-10-04 15:00,2014-10-06 15:00,2014-10-04 15:00,2014-10-06 15:00,2014-10-04 15:00,2014-10-06 15:00,2015-04-26 15:00,2015-04-28 15:00,,PT_Normal,,,,,M6iWORPsZ0y1by1YBuzPHQ,0H5f8xOvBkm8/2pHAZfFZA,,,N,0,0,,,2014-04-13 07:21,2014-04-14 15:50,admin,admin,
1810,141907,6971,40335,7842,0,N,N,N,CP_Phys,TT_Task,DT_FixedDrtn,TK_NotStart,CZA-TK-0710-1790,Welding,8375,1750,0,50,0,0,0,50,50,0,50,,,,2015-04-28 15:00,2015-05-04 15:00,,2014-10-06 15:00,2014-10-12 15:00,2014-10-06 15:00,2014-10-12 15:00,2014-10-06 15:00,2014-10-12 15:00,2015-04-28 15:00,2015-05-04 15:00,,PT_Normal,,,,,0ePPYRGHWECGT09WW229qg,rVWJ17Pblk2gwbtG1dVzng,,,N,0,0,,,2014-04-13 07:21,2014-04-14 15:50,admin,admin,
1811,141908,6971,40335,7842,0,N,N,N,CP_Phys,TT_Task,DT_FixedDrtn,TK_NotStart,CZA-TK-0710-1800,Inspection,8375,1750,0,70,0,0,0,70,0,0,0,,,,2015-04-26 15:00,2015-05-04 15:00,,2014-10-04 15:00,2014-10-12 15:00,2014-10-04 15:00,2014-10-12 15:00,2014-10-04 15:00,2014-10-12 15:00,2015-04-26 15:00,2015-05-04 15:00,,PT_Normal,,,,,68gSJnYl70K49RGAvK2rWQ,sQsnFRCQHEOAsoS6eM14kg,,,N,0,0,,,2014-04-13 07:21,2014-04-14 15:50,admin,admin,
1812,141909,6971,40236,7842,0,N,N,N,CP_Phys,TT_Task,DT_FixedDrtn,TK_NotStart,CZA-TK-0710-1810,Erection and Fit-up,8375,1750,0,20,0,0,0,20,20,0,20,,,,2015-05-04 15:00,2015-05-06 15:00,,2014-10-12 15:00,2014-10-14 15:00,2014-10-12 15:00,2014-10-14 15:00,2014-10-12 15:00,2014-10-14 15:00,2015-05-04 15:00,2015-05-06 15:00,,PT_Normal,,,,,lXLmvfy97E6yjCsUmpY1CQ,I8rVN6vi3kGm/6N92/6RQw,,,N,0,0,,,2014-04-13 07:21,2014-04-14 15:50,admin,admin,
1813,141910,6971,40236,7842,0,N,N,N,CP_Phys,TT_Task,DT_FixedDrtn,TK_NotStart,CZA-TK-0710-1820,Welding,8375,1750,0,50,0,0,0,50,50,0,50,,,,2015-05-06 15:00,2015-05-12 15:00,,2014-10-14 15:00,2014-10-20 15:00,2014-10-14 15:00,2014-10-20 15:00,2014-10-14 15:00,2014-10-20 15:00,2015-05-06 15:00,2015-05-12 15:00,,PT_Normal,,,,,hZm2LS8WukajybzFqTQ9dg,AXx7AZSCCkKFue+yWaVRjA,,,N,0,0,,,2014-04-13 07:21,2014-04-14 15:50,admin,admin,
1814,141911,6971,40236,7842,0,N,N,N,CP_Phys,TT_Task,DT_FixedDrtn,TK_NotStart,CZA-TK-0710-1830,Inspection,8375,1750,0,70,0,0,0,70,0,0,0,,,,2015-05-04 15:00,2015-05-12 15:00,,2014-10-12 15:00,2014-10-20 15:00,2014-10-12 15:00,2014-10-20 15:00,2014-10-12 15:00,2014-10-20 15:00,2015-05-04 15:00,2015-05-12 15:00,,PT_Normal,,,,,0FwIb5Lx4EyF9h3X9kdzKA,jDBwQJVSE0SN5dyLMdBGNg,,,N,0,0,,,2014-04-13 07:21,2014-04-14 15:50,admin,admin,
1815,141912,6971,40237,7842,0,N,N,N,CP_Phys,TT_Task,DT_FixedDrtn,TK_NotStart,CZA-TK-0710-1240,Laying and Fit-up,8375,1750,0,20,0,308.758614,308.758614,20,20,0,20,,,,2014-10-23 15:00,2014-10-26 15:00,,2014-04-02 15:00,2014-04-05 15:00,2014-04-02 15:00,2014-04-05 15:00,2014-04-02 15:00,2014-04-05 15:00,2014-10-23 15:00,2014-10-26 15:00,,PT_Normal,,,,,wB4AEpFNsUi6n2n0Wanxeg,Csz+pivt/0Gz4ijmU/Vj/g,,,N,0,0,,,2014-04-13 07:21,2014-04-14 15:50,admin,admin,
1816,141913,6971,40237,7842,0,N,N,N,CP_Phys,TT_Task,DT_FixedDrtn,TK_NotStart,CZA-TK-0710-1250,Welding,8375,1750,0,50,0,385.948268,385.948268,50,50,0,50,,,,2014-10-26 15:00,2014-11-01 15:00,,2014-04-05 15:00,2014-04-10 15:00,2014-04-05 15:00,2014-04-10 15:00,2014-04-05 15:00,2014-04-10 15:00,2014-10-26 15:00,2014-11-01 15:00,,PT_Normal,,,,,1/m8GH2sw0yTnpsdPLJ7Gg,7BYecn6JOE+DDUc6WBtfHA,,,N,0,0,,,2014-04-13 07:21,2014-04-14 15:50,admin,admin,
1817,141914,6971,40237,7842,0,N,N,N,CP_Phys,TT_Task,DT_FixedDrtn,TK_NotStart,CZA-TK-0710-1260,Inspection,8375,1750,0,70,0,77.189654,77.189654,70,0,0,0,,,,2014-10-23 15:00,2014-11-01 15:00,,2014-04-02 15:00,2014-04-10 15:00,2014-04-02 15:00,2014-04-10 15:00,2014-04-02 15:00,2014-04-10 15:00,2014-10-23 15:00,2014-11-01 15:00,,PT_Normal,,,,,VpbAylynnku4U4l3o+aQqg,M4jZF8iKX0OVH7NDBKwwhQ,,,N,0,0,,,2014-04-13 07:21,2014-04-14 15:50,admin,admin,
1818,141915,6971,39940,7842,0,N,N,N,CP_Phys,TT_Task,DT_FixedDrtn,TK_NotStart,CZA-TK-0721-1469,"Filling, Holding and Draining of Water",8409,1790,0,70,0,5666.994564,5666.994564,70,0,0,0,,,,2015-05-26 15:00,2015-06-03 15:00,,2014-10-29 15:00,2014-11-06 15:00,2014-10-29 15:00,2014-11-06 15:00,2014-10-29 15:00,2014-11-06 15:00,2015-05-26 15:00,2015-06-03 15:00,,PT_Normal,,,,,1RImQJNlkUCqYpkZ5ztVBw,7JBKF83gHEyvWObqCCK7TA,,,N,0,0,,,2014-04-13 07:21,2014-04-14 16:04,admin,admin,
1819,141916,6971,39963,7842,0,N,N,N,CP_Phys,TT_Mile,DT_FixedDrtn,TK_NotStart,CZA-TK-0721-1408,Foundation Takeover From Client,,0,0,0,0,0,0,0,0,0,0,2014-03-09 07:00,,,2014-03-09 07:00,2014-03-09 07:00,,2014-03-09 07:00,2014-03-09 07:00,2014-03-09 07:00,2014-03-09 07:00,2014-03-09 07:00,2014-03-09 07:00,2014-03-09 07:00,2014-03-09 07:00,CS_MSO,PT_Normal,,,,,fiQ+YcuE/UmX1F8jqxKA8g,Z73K6XNS5U6K21JCaSt0Ow,,,N,0,0,,,2014-04-13 07:21,2014-04-13 07:21,admin,admin,
1820,141917,6971,40147,7842,0,N,N,N,CP_Phys,TT_Task,DT_FixedDrtn,TK_NotStart,CZA-TK-0721-1415,Erection and Fit-up,8409,2362,0,10,0,257.332772,257.332772,10,10,0,10,,,,2014-12-25 15:00,2014-12-27 15:00,,2014-03-25 13:00,2014-03-26 13:00,2014-03-25 13:00,2014-03-26 13:00,2014-03-25 13:00,2014-03-26 13:00,2014-12-25 15:00,2014-12-27 15:00,,PT_Normal,,,,,SPEohKF55EaWQCtEvvfUWA,NEEiURzJI0CFEUyx6dxh6A,,,N,0,0,,,2014-04-13 07:21,2014-04-14 17:03,admin,admin,
1821,141918,6971,40147,7842,0,N,N,N,CP_Phys,TT_Task,DT_FixedDrtn,TK_NotStart,CZA-TK-0721-1416,Welding,8409,2362,0,50,0,321.665966,321.665966,50,50,0,50,,,,2014-12-27 15:00,2015-01-01 15:00,,2014-03-26 13:00,2014-04-01 13:00,2014-03-26 13:00,2014-04-01 13:00,2014-03-26 13:00,2014-04-01 13:00,2014-12-27 15:00,2015-01-01 15:00,,PT_Normal,,,,,wloSIdyJIUOVL4QbZtW6PA,z5y9eV53sUCMdYSrzXL80Q,,,N,0,0,,,2014-04-13 07:21,2014-04-15 07:43,admin,admin,
1822,141919,6971,40147,7842,0,N,N,N,CP_Phys,TT_Task,DT_FixedDrtn,TK_NotStart,CZA-TK-0721-1417,Inspection,8409,2362,0,60,0,64.333194,64.333194,60,0,0,0,,,,2014-12-25 15:00,2015-01-01 15:00,,2014-03-25 13:00,2014-04-01 13:00,2014-03-25 13:00,2014-04-01 13:00,2014-03-25 13:00,2014-04-01 13:00,2014-12-25 15:00,2015-01-01 15:00,,PT_Normal,,,,,yA1H0rplP0aPx1c81tbMEA,8yU61xoZ90usS8LAsZK7ow,,,N,0,0,,,2014-04-13 07:21,2014-04-14 17:03,admin,admin,
1823,141920,6971,40162,7842,0,N,N,N,CP_Phys,TT_Task,DT_FixedDrtn,TK_NotStart,CZA-TK-0721-1449,Erection and Fit-up,8409,2362,0,30,0,373.185316,373.185316,30,30,0,30,,,,2015-03-22 15:00,2015-03-25 15:00,,2014-06-19 13:00,2014-06-23 13:00,2014-06-19 13:00,2014-06-23 13:00,2014-06-19 13:00,2014-06-23 13:00,2015-03-22 15:00,2015-03-25 15:00,,PT_Normal,,,,,c18rSdzoHESgLi+MbckwSA,3pPbWNz02ECXWFvlQXUUzw,,,N,0,0,,,2014-04-13 07:21,2014-04-14 16:04,admin,admin,
1824,141921,6971,40162,7842,0,N,N,N,CP_Phys,TT_Task,DT_FixedDrtn,TK_NotStart,CZA-TK-0721-1450,Welding,8409,2362,0,60,0,466.481646,466.481646,60,60,0,60,,,,2015-03-25 15:00,2015-04-01 15:00,,2014-06-23 13:00,2014-06-30 13:00,2014-06-23 13:00,2014-06-30 13:00,2014-06-23 13:00,2014-06-30 13:00,2015-03-25 15:00,2015-04-01 15:00,,PT_Normal,,,,,fzfwgRoCGUqVMZ6r/AKcMQ,CMJVuBtxs0WpSvJMgYzpdQ,,,N,0,0,,,2014-04-13 07:21,2014-04-14 17:03,admin,admin,
1825,141922,6971,40162,7842,0,N,N,N,CP_Phys,TT_Task,DT_FixedDrtn,TK_NotStart,CZA-TK-0721-1451,Inspection,8409,2362,0,90,0,93.29633,93.29633,90,0,0,0,,,,2015-03-22 15:00,2015-04-01 15:00,,2014-06-19 13:00,2014-06-30 13:00,2014-06-19 13:00,2014-06-30 13:00,2014-06-19 13:00,2014-06-30 13:00,2015-03-22 15:00,2015-04-01 15:00,,PT_Normal,,,,,szi0DBQ5CU60dAhy6ek8dw,Edl0QwnUX0KIhV9WGm0FWg,,,N,0,0,,,2014-04-13 07:21,2014-04-14 17:03,admin,admin,
1826,141923,6971,40163,7842,0,N,N,N,CP_Phys,TT_Task,DT_FixedDrtn,TK_NotStart,CZA-TK-0721-1453,Welding,8409,2362,0,70,0,591.961906,591.961906,70,70,0,70,,,,2015-04-04 15:00,2015-04-12 15:00,,2014-07-02 13:00,2014-07-10 13:00,2014-07-02 13:00,2014-07-10 13:00,2014-07-02 13:00,2014-07-10 13:00,2015-04-04 15:00,2015-04-12 15:00,,PT_Normal,,,,,UNQFnJ9nWkODJQeDjzU3TQ,b1nZsMlO1kWoeCCjltwXCA,,,N,0,0,,,2014-04-13 07:21,2014-04-14 17:03,admin,admin,
1827,141924,6971,40163,7842,0,N,N,N,CP_Phys,TT_Task,DT_FixedDrtn,TK_NotStart,CZA-TK-0721-1454,Inspection,8409,2362,0,90,0,118.392382,118.392382,90,0,0,0,,,,2015-04-01 15:00,2015-04-12 15:00,,2014-06-30 13:00,2014-07-10 13:00,2014-06-30 13:00,2014-07-10 13:00,2014-06-30 13:00,2014-07-10 13:00,2015-04-01 15:00,2015-04-12 15:00,,PT_Normal,,,,,ZwCsVPbG2k+EE7DYGe9/cA,ZJLvsA/nKk2A1bYBYtNjEg,,,N,0,0,,,2014-04-13 07:21,2014-04-14 17:03,admin,admin,
1828,141925,6971,40163,7842,0,N,N,N,CP_Phys,TT_Task,DT_FixedDrtn,TK_NotStart,CZA-TK-0721-1452,Laying and Fit-up,8409,2362,0,20,0,473.569526,473.569526,20,20,0,20,,,,2015-04-01 15:00,2015-04-04 15:00,,2014-06-30 13:00,2014-07-02 13:00,2014-06-30 13:00,2014-07-02 13:00,2014-06-30 13:00,2014-07-02 13:00,2015-04-01 15:00,2015-04-04 15:00,,PT_Normal,,,,,y32XdARHxUOlDV2NwnYyTg,lqoLLr7/5kygFnKu35ZK/A,,,N,0,0,,,2014-04-13 07:21,2014-04-14 16:04,admin,admin,
1829,141926,6971,40164,7842,0,N,N,N,CP_Phys,TT_Task,DT_FixedDrtn,TK_NotStart,CZA-TK-0721-1455,Laying and Fit-up,8409,2362,0,10,0,0,0,10,10,0,10,,,,2015-04-12 15:00,2015-04-13 15:00,,2014-07-10 13:00,2014-07-12 13:00,2014-07-10 13:00,2014-07-12 13:00,2014-07-10 13:00,2014-07-12 13:00,2015-04-12 15:00,2015-04-13 15:00,,PT_Normal,,,,,3IPcT1OLcUmMEcSOitqxTA,38rDDPsbtU6lg7401KsAhA,,,N,0,0,,,2014-04-13 07:21,2014-04-14 16:04,admin,admin,
1830,141927,6971,40164,7842,0,N,N,N,CP_Phys,TT_Task,DT_FixedDrtn,TK_NotStart,CZA-TK-0721-1456,Welding,8409,2362,0,60,0,0,0,60,60,0,60,,,,2015-04-13 15:00,2015-04-20 15:00,,2014-07-12 13:00,2014-07-19 13:00,2014-07-12 13:00,2014-07-19 13:00,2014-07-12 13:00,2014-07-19 13:00,2015-04-13 15:00,2015-04-20 15:00,,PT_Normal,,,,,xbwEPDiEokGsdMEcnSKCUg,KI89ugmbZEK0feP4KzqiJQ,,,N,0,0,,,2014-04-13 07:21,2014-04-14 16:04,admin,admin,
1831,141928,6971,40164,7842,0,N,N,N,CP_Phys,TT_Task,DT_FixedDrtn,TK_NotStart,CZA-TK-0721-1457,Inspection,8409,2362,0,70,0,0,0,70,0,0,0,,,,2015-04-12 15:00,2015-04-20 15:00,,2014-07-10 13:00,2014-07-19 13:00,2014-07-10 13:00,2014-07-19 13:00,2014-07-10 13:00,2014-07-19 13:00,2015-04-12 15:00,2015-04-20 15:00,,PT_Normal,,,,,eoI+8ZCOg0GZ84O3CY9K0Q,E6Lo4VBoC0yT1PYgOG2gmg,,,N,0,0,,,2014-04-13 07:21,2014-04-14 16:04,admin,admin,
1832,141929,6971,40132,7842,0,N,N,N,CP_Phys,TT_Task,DT_FixedDrtn,TK_NotStart,CZA-TK-0721-1437,Erection and Fit-up,8409,2362,0,10,0,198.627174,198.627174,10,10,0,10,,,,2015-02-24 15:00,2015-02-25 15:00,,2014-05-25 13:00,2014-05-26 13:00,2014-05-25 13:00,2014-05-26 13:00,2014-05-25 13:00,2014-05-26 13:00,2015-02-24 15:00,2015-02-25 15:00,,PT_Normal,,,,,MDj0+07TNEes1ENwRw5JyQ,ntaVY//C7EWSowKzw2M/Sw,,,N,0,0,,,2014-04-13 07:21,2014-04-14 16:04,admin,admin,
1833,141930,6971,40132,7842,0,N,N,N,CP_Phys,TT_Task,DT_FixedDrtn,TK_NotStart,CZA-TK-0721-1438,Welding,8409,2362,0,50,0,248.283968,248.283968,50,50,0,50,,,,2015-02-25 15:00,2015-03-03 15:00,,2014-05-26 13:00,2014-06-01 13:00,2014-05-26 13:00,2014-06-01 13:00,2014-05-26 13:00,2014-06-01 13:00,2015-02-25 15:00,2015-03-03 15:00,,PT_Normal,,,,,5Cnpu1fbN0KAxLydvD6ESw,WjufB/43/0uh+CHEmNd6Ug,,,N,0,0,,,2014-04-13 07:21,2014-04-14 16:04,admin,admin,
1834,141931,6971,40132,7842,0,N,N,N,CP_Phys,TT_Task,DT_FixedDrtn,TK_NotStart,CZA-TK-0721-1439,Inspection,8409,2362,0,60,0,49.656794,49.656794,60,0,0,0,,,,2015-02-24 15:00,2015-03-03 15:00,,2014-05-25 13:00,2014-06-01 13:00,2014-05-25 13:00,2014-06-01 13:00,2014-05-25 13:00,2014-06-01 13:00,2015-02-24 15:00,2015-03-03 15:00,,PT_Normal,,,,,xjYMmncOT0mpC58ArStmOg,nnGKkivXPkKw2oUYJvxWUA,,,N,0,0,,,2014-04-13 07:21,2014-04-14 16:04,admin,admin,
1835,141932,6971,40166,7842,0,N,N,N,CP_Phys,TT_Task,DT_FixedDrtn,TK_NotStart,CZA-TK-0721-1440,Erection and Fit-up,8409,2362,0,10,0,43.024506,43.024506,10,10,0,10,,,,2015-03-03 15:00,2015-03-04 15:00,,2014-06-01 13:00,2014-06-02 13:00,2014-06-01 13:00,2014-06-02 13:00,2014-06-01 13:00,2014-06-02 13:00,2015-03-03 15:00,2015-03-04 15:00,,PT_Normal,,,,,GuEM5uTmdkCSbCDn9o1k5w,3j5R7vJWHE2lsvhxu9yzeQ,,,N,0,0,,,2014-04-13 07:21,2014-04-14 16:04,admin,admin,
1836,141933,6971,40166,7842,0,N,N,N,CP_Phys,TT_Task,DT_FixedDrtn,TK_NotStart,CZA-TK-0721-1442,Inspection,8409,2362,0,10,0,10.756126,10.756126,10,0,0,0,,,,2015-03-09 15:00,2015-03-10 15:00,,2014-06-07 13:00,2014-06-08 13:00,2014-06-07 13:00,2014-06-08 13:00,2014-06-07 13:00,2014-06-08 13:00,2015-03-09 15:00,2015-03-10 15:00,,PT_Normal,,,,,BDmSwAyY+0u1pI0kbDFlHw,0tqGML6JrkWM0sBR6jSZTQ,,,N,0,0,,,2014-04-13 07:21,2014-04-14 16:04,admin,admin,
1837,141934,6971,40166,7842,0,N,N,N,CP_Phys,TT_Task,DT_FixedDrtn,TK_NotStart,CZA-TK-0721-1441,Welding,8409,2362,0,50,0,53.780632,53.780632,50,50,0,50,,,,2015-03-04 15:00,2015-03-10 15:00,,2014-06-02 13:00,2014-06-08 13:00,2014-06-02 13:00,2014-06-08 13:00,2014-06-02 13:00,2014-06-08 13:00,2015-03-04 15:00,2015-03-10 15:00,,PT_Normal,,,,,JCqztalOAU+HX0xDkhT9LQ,+JfCWsS/gEyxyOC7ISKlyA,,,N,0,0,,,2014-04-13 07:21,2014-04-14 16:04,admin,admin,
1838,141935,6971,40180,7842,0,N,N,N,CP_Phys,TT_Task,DT_FixedDrtn,TK_NotStart,CZA-TK-0721-1443,Erection and Fit-up,8409,2362,0,10,0,180.293166,180.293166,10,10,0,10,,,,2015-03-10 15:00,2015-03-11 15:00,,2014-06-08 13:00,2014-06-09 13:00,2014-06-08 13:00,2014-06-09 13:00,2014-06-08 13:00,2014-06-09 13:00,2015-03-10 15:00,2015-03-11 15:00,,PT_Normal,,,,,f3rRGM4Kq0i8Cdy20lg3gA,kWHmLFHM+E2lUZww3WKkSQ,,,N,0,0,,,2014-04-13 07:21,2014-04-14 17:03,admin,admin,
1839,141936,6971,40180,7842,0,N,N,N,CP_Phys,TT_Task,DT_FixedDrtn,TK_NotStart,CZA-TK-0721-1444,Welding,8409,2362,0,50,0,225.366458,225.366458,50,50,0,50,,,,2015-03-11 15:00,2015-03-17 15:00,,2014-06-09 13:00,2014-06-15 13:00,2014-06-09 13:00,2014-06-15 13:00,2014-06-09 13:00,2014-06-15 13:00,2015-03-11 15:00,2015-03-17 15:00,,PT_Normal,,,,,v8RrcYB/90mUB/sV3cWK4w,VAqp+5HP6UmbsLCUA5vTzw,,,N,0,0,,,2014-04-13 07:21,2014-04-14 16:04,admin,admin,
1840,141937,6971,40180,7842,0,N,N,N,CP_Phys,TT_Task,DT_FixedDrtn,TK_NotStart,CZA-TK-0721-1445,Inspection,8409,2362,0,10,0,45.073292,45.073292,10,0,0,0,,,,2015-03-16 15:00,2015-03-17 15:00,,2014-06-14 13:00,2014-06-15 13:00,2014-06-14 13:00,2014-06-15 13:00,2014-06-14 13:00,2014-06-15 13:00,2015-03-16 15:00,2015-03-17 15:00,,PT_Normal,,,,,Jz3jpnOA002DMuCR78g0oA,Fpdj67wvHEm/l+lhRgohig,,,N,0,0,,,2014-04-13 07:21,2014-04-14 16:04,admin,admin,
1841,141938,6971,40249,7842,0,N,N,N,CP_Phys,TT_Task,DT_FixedDrtn,TK_NotStart,CZA-TK-0721-1446,"Cutting, Installation and Fit-up",8409,2362,0,20,0,0,0,20,20,0,20,,,,2015-03-17 15:00,2015-03-19 15:00,,2014-06-15 13:00,2014-06-17 13:00,2014-06-15 13:00,2014-06-17 13:00,2014-06-15 13:00,2014-06-17 13:00,2015-03-17 15:00,2015-03-19 15:00,,PT_Normal,,,,,BAH1Stz7yUejddflY5vFbw,7q99gx9bQkedYBiQ32ZKRw,,,N,0,0,,,2014-04-13 07:21,2014-04-14 16:04,admin,admin,
1842,141939,6971,40249,7842,0,N,N,N,CP_Phys,TT_Task,DT_FixedDrtn,TK_NotStart,CZA-TK-0721-1447,Welding,8409,2362,0,20,0,0,0,20,20,0,20,,,,2015-03-19 15:00,2015-03-22 15:00,,2014-06-17 13:00,2014-06-19 13:00,2014-06-17 13:00,2014-06-19 13:00,2014-06-17 13:00,2014-06-19 13:00,2015-03-19 15:00,2015-03-22 15:00,,PT_Normal,,,,,lAbHPn1W80y7aIkieuVz6A,w2Rp5z2q6kmvl7ZfKfB6Lw,,,N,0,0,,,2014-04-13 07:21,2014-04-14 16:04,admin,admin,
1843,141940,6971,40249,7842,0,N,N,N,CP_Phys,TT_Task,DT_FixedDrtn,TK_NotStart,CZA-TK-0721-1448,Inspection,8409,2362,0,40,0,0,0,40,0,0,0,,,,2015-03-17 15:00,2015-03-22 15:00,,2014-06-15 13:00,2014-06-19 13:00,2014-06-15 13:00,2014-06-19 13:00,2014-06-15 13:00,2014-06-19 13:00,2015-03-17 15:00,2015-03-22 15:00,,PT_Normal,,,,,QF+HII63BEqpCqYVXs1rPw,WOlW76z3mUq2ZTH1+reU/Q,,,N,0,0,,,2014-04-13 07:21,2014-04-14 16:04,admin,admin,
1844,141941,6971,40359,7842,0,N,N,N,CP_Phys,TT_Task,DT_FixedDrtn,TK_NotStart,CZA-TK-0721-1458,Installation and Fit-up,8409,2362,0,20,0,0,0,20,20,0,20,,,,2015-04-20 15:00,2015-04-22 15:00,,2014-07-19 13:00,2014-07-21 13:00,2014-07-19 13:00,2014-07-21 13:00,2014-07-19 13:00,2014-07-21 13:00,2015-04-20 15:00,2015-04-22 15:00,,PT_Normal,,,,,4XEkX4fQrUqBfJVqovVHYA,bD2aSVsRPUGwVgEu44Yb3g,,,N,0,0,,,2014-04-13 07:21,2014-04-14 16:04,admin,admin,
1845,141942,6971,40359,7842,0,N,N,N,CP_Phys,TT_Task,DT_FixedDrtn,TK_NotStart,CZA-TK-0721-1459,Welding,8409,2362,0,40,0,0,0,40,40,0,40,,,,2015-04-22 15:00,2015-04-27 15:00,,2014-07-21 13:00,2014-07-26 13:00,2014-07-21 13:00,2014-07-26 13:00,2014-07-21 13:00,2014-07-26 13:00,2015-04-22 15:00,2015-04-27 15:00,,PT_Normal,,,,,aFAcrQPuHUS2STmM+Lc8jQ,GxHnLl5VIkuOEAgeAd9eOA,,,N,0,0,,,2014-04-13 07:21,2014-04-14 16:04,admin,admin,
1846,141943,6971,40359,7842,0,N,N,N,CP_Phys,TT_Task,DT_FixedDrtn,TK_NotStart,CZA-TK-0721-1460,Inspection,8409,2362,0,60,0,0,0,60,0,0,0,,,,2015-04-20 15:00,2015-04-27 15:00,,2014-07-19 13:00,2014-07-26 13:00,2014-07-19 13:00,2014-07-26 13:00,2014-07-19 13:00,2014-07-26 13:00,2015-04-20 15:00,2015-04-27 15:00,,PT_Normal,,,,,R+o6sTYLd0qmKffdRZcj4Q,M+mAsAseME6UwHJ2LqieAg,,,N,0,0,,,2014-04-13 07:21,2014-04-14 16:04,admin,admin,
1847,141944,6971,40192,7842,0,N,N,N,CP_Phys,TT_Task,DT_FixedDrtn,TK_NotStart,CZA-TK-0721-1461,Erection and Fit-up,8409,2362,0,30,0,0,0,30,30,0,30,,,,2015-04-27 15:00,2015-04-30 15:00,,2014-07-26 13:00,2014-07-29 13:00,2014-07-26 13:00,2014-07-29 13:00,2014-07-26 13:00,2014-07-29 13:00,2015-04-27 15:00,2015-04-30 15:00,,PT_Normal,,,,,GsTXhFsGfEKM61AeCpaHOQ,xISvkONOLUeuW4e6JAtS5g,,,N,0,0,,,2014-04-13 07:21,2014-04-14 16:04,admin,admin,
1848,141945,6971,40192,7842,0,N,N,N,CP_Phys,TT_Task,DT_FixedDrtn,TK_NotStart,CZA-TK-0721-1462,Welding,8409,2362,0,80,0,0,0,80,80,0,80,,,,2015-04-30 15:00,2015-05-10 15:00,,2014-07-29 13:00,2014-08-07 13:00,2014-07-29 13:00,2014-08-07 13:00,2014-07-29 13:00,2014-08-07 13:00,2015-04-30 15:00,2015-05-10 15:00,,PT_Normal,,,,,WEv7iZ71aEmuHW9CfoEhrQ,FHRY9Pkt6keAe1jb8Uv9Iw,,,N,0,0,,,2014-04-13 07:21,2014-04-14 16:04,admin,admin,
1849,141946,6971,40192,7842,0,N,N,N,CP_Phys,TT_Task,DT_FixedDrtn,TK_NotStart,CZA-TK-0721-1463,Inspection,8409,2362,0,110,0,0,0,110,0,0,0,,,,2015-04-27 15:00,2015-05-10 15:00,,2014-07-26 13:00,2014-08-07 13:00,2014-07-26 13:00,2014-08-07 13:00,2014-07-26 13:00,2014-08-07 13:00,2015-04-27 15:00,2015-05-10 15:00,,PT_Normal,,,,,IXI0kjRveka4s5wUoqfwLg,3A/uUzchU0qqxttIh1oVVg,,,N,0,0,,,2014-04-13 07:21,2014-04-14 16:04,admin,admin,
1850,141947,6971,40193,7842,0,N,N,N,CP_Phys,TT_Task,DT_FixedDrtn,TK_NotStart,CZA-TK-0721-1464,Erection and Fit-up,8409,2362,0,30,0,0,0,30,30,0,30,,,,2015-05-10 15:00,2015-05-13 15:00,,2014-08-07 13:00,2014-08-11 13:00,2014-08-07 13:00,2014-08-11 13:00,2014-08-07 13:00,2014-08-11 13:00,2015-05-10 15:00,2015-05-13 15:00,,PT_Normal,,,,,9CA2JjQcc0ucP95DTMAUKA,DKEo/ibBLEySvEDQT8snLQ,,,N,0,0,,,2014-04-13 07:21,2014-04-14 16:04,admin,admin,
1851,141948,6971,40193,7842,0,N,N,N,CP_Phys,TT_Task,DT_FixedDrtn,TK_NotStart,CZA-TK-0721-1465,Welding,8409,2362,0,80,0,0,0,80,80,0,80,,,,2015-05-13 15:00,2015-05-23 15:00,,2014-08-11 13:00,2014-08-20 13:00,2014-08-11 13:00,2014-08-20 13:00,2014-08-11 13:00,2014-08-20 13:00,2015-05-13 15:00,2015-05-23 15:00,,PT_Normal,,,,,aXc6e4TTQ0eHw18NRagHDg,qRkvgRKmaUWOLjG6xvQh+Q,,,N,0,0,,,2014-04-13 07:21,2014-04-14 16:04,admin,admin,
1852,141949,6971,40193,7842,0,N,N,N,CP_Phys,TT_Task,DT_FixedDrtn,TK_NotStart,CZA-TK-0721-1466,Inspection,8409,2362,0,110,0,0,0,110,0,0,0,,,,2015-05-10 15:00,2015-05-23 15:00,,2014-08-07 13:00,2014-08-20 13:00,2014-08-07 13:00,2014-08-20 13:00,2014-08-07 13:00,2014-08-20 13:00,2015-05-10 15:00,2015-05-23 15:00,,PT_Normal,,,,,+CfXefRdcU+OGAQKhOa5Zg,GgO/xwUyZ0qNZDD5nEZPVQ,,,N,0,0,,,2014-04-13 07:21,2014-04-14 16:04,admin,admin,
1853,141950,6971,40153,7842,0,N,N,N,CP_Phys,TT_Task,DT_FixedDrtn,TK_NotStart,CZA-TK-0721-1467,Installation of Primary and Secondary Seal,8409,2362,0,30,0,0,0,30,0,0,0,,,,2015-05-23 15:00,2015-05-26 15:00,,2014-08-20 13:00,2014-08-24 13:00,2014-08-20 13:00,2014-08-24 13:00,2014-08-20 13:00,2014-08-24 13:00,2015-05-23 15:00,2015-05-26 15:00,,PT_Normal,,,,,lctB+KHHhkioZX6lUIP3eg,cquuRxOC5kCGXP3THseniA,,,N,0,0,,,2014-04-13 07:21,2014-04-14 16:04,admin,admin,
1854,141951,6971,40153,7842,0,N,N,N,CP_Phys,TT_Task,DT_FixedDrtn,TK_NotStart,CZA-TK-0721-1468,Inspection,8409,2362,572,30,0,0,0,30,0,0,0,,,,2015-05-23 15:00,2015-05-26 15:00,,2014-08-20 13:00,2014-08-24 13:00,2014-08-20 13:00,2014-08-24 13:00,2014-08-20 13:00,2014-08-24 13:00,2015-05-23 15:00,2015-05-26 15:00,,PT_Normal,,,,,Q+X5nOizz0uj94SgJeurIQ,FY8q/Zdqx0SplbZ4Oay9IQ,,,N,0,0,,,2014-04-13 07:21,2014-04-14 16:04,admin,admin,
1855,141952,6971,40154,7842,0,N,N,N,CP_Phys,TT_Task,DT_FixedDrtn,TK_NotStart,CZA-TK-0721-1427,"Cutting of All Holes, Laying and Fit-up",8409,2362,0,10,0,1324.427192,1324.427192,10,10,0,10,,,,2015-01-29 15:00,2015-01-31 15:00,,2014-04-29 13:00,2014-04-30 13:00,2014-04-29 13:00,2014-04-30 13:00,2014-04-29 13:00,2014-04-30 13:00,2015-01-29 15:00,2015-01-31 15:00,,PT_Normal,,,,,YEYrnO+XX0K8tXt5vt1ukw,JTuM26P3g0ucrKgrFjf2jA,,,N,0,0,,,2014-04-13 07:21,2014-04-14 17:03,admin,admin,
1856,141953,6971,40154,7842,0,N,N,N,CP_Phys,TT_Task,DT_FixedDrtn,TK_NotStart,CZA-TK-0721-1428,Welding of Sleeves and Plates,8409,2362,0,80,0,1655.53399,1655.53399,80,80,0,80,,,,2015-01-31 15:00,2015-02-09 15:00,,2014-04-30 13:00,2014-05-10 13:00,2014-04-30 13:00,2014-05-10 13:00,2014-04-30 13:00,2014-05-10 13:00,2015-01-31 15:00,2015-02-09 15:00,,PT_Normal,,,,,r+0MiEk1S0qngL9oU9Bicw,rbefhaYsoUKKd3Egft+02w,,,N,0,0,,,2014-04-13 07:21,2014-04-14 17:03,admin,admin,
1857,141954,6971,40154,7842,0,N,N,N,CP_Phys,TT_Task,DT_FixedDrtn,TK_NotStart,CZA-TK-0721-1429,Installation of Leg Support,8409,2362,0,10,0,165.5534,165.5534,10,10,0,10,,,,2015-02-09 15:00,2015-02-10 15:00,,2014-05-10 13:00,2014-05-11 13:00,2014-05-10 13:00,2014-05-11 13:00,2014-05-10 13:00,2014-05-11 13:00,2015-02-09 15:00,2015-02-10 15:00,,PT_Normal,,,,,Jkz8D/chrU+ue3i09h3rnA,rKzt6vLqCUOW8OuBiNh8cA,,,N,0,0,,,2014-04-13 07:21,2014-04-14 17:03,admin,admin,
1858,141955,6971,40154,7842,0,N,N,N,CP_Phys,TT_Task,DT_FixedDrtn,TK_NotStart,CZA-TK-0721-1430,Inspection,8409,2362,0,100,0,165.5534,165.5534,100,0,0,0,,,,2015-01-29 15:00,2015-02-10 15:00,,2014-04-29 13:00,2014-05-11 13:00,2014-04-29 13:00,2014-05-11 13:00,2014-04-29 13:00,2014-05-11 13:00,2015-01-29 15:00,2015-02-10 15:00,,PT_Normal,,,,,8NZFy24d+0+oO7rXiy314Q,GjMNeeR2OUKlTE4N5V1gVg,,,N,0,0,,,2014-04-13 07:21,2014-04-14 17:03,admin,admin,
1859,141956,6971,40165,7842,0,N,N,N,CP_Phys,TT_Task,DT_FixedDrtn,TK_NotStart,CZA-TK-0721-1418,Erection and Fit-up,8409,2362,0,10,0,231.644148,231.644148,10,10,0,10,,,,2015-01-01 15:00,2015-01-03 15:00,,2014-04-01 13:00,2014-04-02 13:00,2014-04-01 13:00,2014-04-02 13:00,2014-04-01 13:00,2014-04-02 13:00,2015-01-01 15:00,2015-01-03 15:00,,PT_Normal,,,,,d13ott8spke+Wiswc0bRNg,1fLtOkID4USsoZiOMIoLqA,,,N,0,0,,,2014-04-13 07:21,2014-04-14 17:03,admin,admin,
1860,141957,6971,40165,7842,0,N,N,N,CP_Phys,TT_Task,DT_FixedDrtn,TK_NotStart,CZA-TK-0721-1419,Welding,8409,2362,0,50,0,289.555186,289.555186,50,50,0,50,,,,2015-01-03 15:00,2015-01-08 15:00,,2014-04-02 13:00,2014-04-08 13:00,2014-04-02 13:00,2014-04-08 13:00,2014-04-02 13:00,2014-04-08 13:00,2015-01-03 15:00,2015-01-08 15:00,,PT_Normal,,,,,ionaBIC7BE69Cnbim1Fqnw,3RILvsatokSR2cgMkZxFJQ,,,N,0,0,,,2014-04-13 07:21,2014-04-14 16:04,admin,admin,
1861,141958,6971,40165,7842,0,N,N,N,CP_Phys,TT_Task,DT_FixedDrtn,TK_NotStart,CZA-TK-0721-1420,Inspection,8409,2362,0,60,0,57.911038,57.911038,60,0,0,0,,,,2015-01-01 15:00,2015-01-08 15:00,,2014-04-01 13:00,2014-04-08 13:00,2014-04-01 13:00,2014-04-08 13:00,2014-04-01 13:00,2014-04-08 13:00,2015-01-01 15:00,2015-01-08 15:00,,PT_Normal,,,,,BRorClOGIUqPTuzkk0niXg,n0S4TbPN6EOJ6Xq2ln0XPw,,,N,0,0,,,2014-04-13 07:21,2014-04-14 17:03,admin,admin,
1862,141959,6971,40356,7842,0,N,N,N,CP_Phys,TT_Task,DT_FixedDrtn,TK_NotStart,CZA-TK-0721-1409,Laying and Fit-up,8409,2362,0,10,0,223.737936,223.737936,10,10,0,10,,,,2014-12-10 15:00,2014-12-11 15:00,,2014-03-10 13:00,2014-03-11 13:00,2014-03-10 13:00,2014-03-11 13:00,2014-03-10 13:00,2014-03-11 13:00,2014-12-10 15:00,2014-12-11 15:00,,PT_Normal,,,,,GPcpgyUAoEKfirBxat8isw,4xTzSv5K0UyQPVgnB+HAyQ,,,N,0,0,,,2014-04-13 07:21,2014-04-14 16:04,admin,admin,
1863,141960,6971,40356,7842,0,N,N,N,CP_Phys,TT_Task,DT_FixedDrtn,TK_NotStart,CZA-TK-0721-1410,Welding,8409,2362,0,20,0,279.67242,279.67242,20,20,0,20,,,,2014-12-11 15:00,2014-12-14 15:00,,2014-03-11 13:00,2014-03-13 13:00,2014-03-11 13:00,2014-03-13 13:00,2014-03-11 13:00,2014-03-13 13:00,2014-12-11 15:00,2014-12-14 15:00,,PT_Normal,,,,,WpDxwgSU1U+WI2Gg6fq+Gg,OW51u38iqkm01dl5+RGrXg,,,N,0,0,,,2014-04-13 07:21,2014-04-14 16:04,admin,admin,
1864,141961,6971,40356,7842,0,N,N,N,CP_Phys,TT_Task,DT_FixedDrtn,TK_NotStart,CZA-TK-0721-1411,Inspection,8409,2362,0,30,0,55.934484,55.934484,30,0,0,0,,,,2014-12-10 15:00,2014-12-14 15:00,,2014-03-10 13:00,2014-03-13 13:00,2014-03-10 13:00,2014-03-13 13:00,2014-03-10 13:00,2014-03-13 13:00,2014-12-10 15:00,2014-12-14 15:00,,PT_Normal,,,,,a4BavbUw00KK+R5LiXhjeg,zRDtiWMtNk+np2JjmFCiyg,,,N,0,0,,,2014-04-13 07:21,2014-04-14 16:04,admin,admin,
1865,141962,6971,40357,7842,0,N,N,N,CP_Phys,TT_Task,DT_FixedDrtn,TK_NotStart,CZA-TK-0721-1412,Erection and Fit-up,8409,2362,0,30,0,223.737936,223.737936,30,30,0,30,,,,2014-12-14 15:00,2014-12-17 15:00,,2014-03-13 13:00,2014-03-17 13:00,2014-03-13 13:00,2014-03-17 13:00,2014-03-13 13:00,2014-03-17 13:00,2014-12-14 15:00,2014-12-17 15:00,,PT_Normal,,,,,ut5H+zigKECRKxDB/KKRpg,q7RfwT5gj0+bXOv0QjWgPw,,,N,0,0,,,2014-04-13 07:21,2014-04-14 16:04,admin,admin,
1866,141963,6971,40357,7842,0,N,N,N,CP_Phys,TT_Task,DT_FixedDrtn,TK_NotStart,CZA-TK-0721-1413,Welding,8409,2362,0,70,0,279.67242,279.67242,70,70,0,70,,,,2014-12-17 15:00,2014-12-25 15:00,,2014-03-17 13:00,2014-03-25 13:00,2014-03-17 13:00,2014-03-25 13:00,2014-03-17 13:00,2014-03-25 13:00,2014-12-17 15:00,2014-12-25 15:00,,PT_Normal,,,,,1J4PBuLeUkGW05v5Grj+6g,1PKmJY62FkK4Sk+s0nSOIA,,,N,0,0,,,2014-04-13 07:21,2014-04-14 16:04,admin,admin,
1867,141964,6971,40357,7842,0,N,N,N,CP_Phys,TT_Task,DT_FixedDrtn,TK_NotStart,CZA-TK-0721-1414,Inspection,8409,2362,0,100,0,55.934484,55.934484,100,0,0,0,,,,2014-12-14 15:00,2014-12-25 15:00,,2014-03-13 13:00,2014-03-25 13:00,2014-03-13 13:00,2014-03-25 13:00,2014-03-13 13:00,2014-03-25 13:00,2014-12-14 15:00,2014-12-25 15:00,,PT_Normal,,,,,zG7havtAhUWhld46mvBsFw,i3kVVkgssE60CyweqM/fjQ,,,N,0,0,,,2014-04-13 07:21,2014-04-14 16:04,admin,admin,
1868,141965,6971,40358,7842,0,N,N,N,CP_Phys,TT_Task,DT_FixedDrtn,TK_NotStart,CZA-TK-0721-1431,Erection and Fit-up,8409,2362,0,10,0,198.627174,198.627174,10,10,0,10,,,,2015-02-10 15:00,2015-02-11 15:00,,2014-05-11 13:00,2014-05-12 13:00,2014-05-11 13:00,2014-05-12 13:00,2014-05-11 13:00,2014-05-12 13:00,2015-02-10 15:00,2015-02-11 15:00,,PT_Normal,,,,,jFVA6ky41EetBBD35GKx/Q,OyYqmoNg3kCd/8AHOdH+cw,,,N,0,0,,,2014-04-13 07:21,2014-04-14 16:04,admin,admin,
1869,141966,6971,40358,7842,0,N,N,N,CP_Phys,TT_Task,DT_FixedDrtn,TK_NotStart,CZA-TK-0721-1432,Welding,8409,2362,0,50,0,248.283968,248.283968,50,50,0,50,,,,2015-02-11 15:00,2015-02-17 15:00,,2014-05-12 13:00,2014-05-18 13:00,2014-05-12 13:00,2014-05-18 13:00,2014-05-12 13:00,2014-05-18 13:00,2015-02-11 15:00,2015-02-17 15:00,,PT_Normal,,,,,i5AJh/dYOEiKYUFF+Hr++w,c5+O/Cg18U+uY0jLxWo4Sg,,,N,0,0,,,2014-04-13 07:21,2014-04-14 16:04,admin,admin,
1870,141967,6971,40358,7842,0,N,N,N,CP_Phys,TT_Task,DT_FixedDrtn,TK_NotStart,CZA-TK-0721-1433,Inspection,8409,2362,0,60,0,49.656794,49.656794,60,0,0,0,,,,2015-02-10 15:00,2015-02-17 15:00,,2014-05-11 13:00,2014-05-18 13:00,2014-05-11 13:00,2014-05-18 13:00,2014-05-11 13:00,2014-05-18 13:00,2015-02-10 15:00,2015-02-17 15:00,,PT_Normal,,,,,zw9wVLxDM0OenXCs8Le0ZQ,wEgU1yksi0GIsFsZWIWpMA,,,N,0,0,,,2014-04-13 07:21,2014-04-14 16:04,admin,admin,
1871,141968,6971,40568,7842,0,N,N,N,CP_Phys,TT_Task,DT_FixedDrtn,TK_NotStart,CZA-TK-0721-1434,Erection and Fit-up,8409,2362,0,10,0,198.627174,198.627174,10,10,0,10,,,,2015-02-17 15:00,2015-02-18 15:00,,2014-05-18 13:00,2014-05-19 13:00,2014-05-18 13:00,2014-05-19 13:00,2014-05-18 13:00,2014-05-19 13:00,2015-02-17 15:00,2015-02-18 15:00,,PT_Normal,,,,,12qWwElA5USKxFV6wis+9A,8r5M3o8SgEWes50CefLAQw,,,N,0,0,,,2014-04-13 07:21,2014-04-14 16:04,admin,admin,
1872,141969,6971,40568,7842,0,N,N,N,CP_Phys,TT_Task,DT_FixedDrtn,TK_NotStart,CZA-TK-0721-1435,Welding,8409,2362,0,50,0,248.283968,248.283968,50,50,0,50,,,,2015-02-18 15:00,2015-02-24 15:00,,2014-05-19 13:00,2014-05-25 13:00,2014-05-19 13:00,2014-05-25 13:00,2014-05-19 13:00,2014-05-25 13:00,2015-02-18 15:00,2015-02-24 15:00,,PT_Normal,,,,,1ESIferbPEi1Vu/XVoEbPw,6lxKm5MuVUubbRaj10fOxQ,,,N,0,0,,,2014-04-13 07:21,2014-04-14 16:04,admin,admin,
1873,141970,6971,40568,7842,0,N,N,N,CP_Phys,TT_Task,DT_FixedDrtn,TK_NotStart,CZA-TK-0721-1436,Inspection,8409,2362,0,60,0,49.656794,49.656794,60,0,0,0,,,,2015-02-17 15:00,2015-02-24 15:00,,2014-05-18 13:00,2014-05-25 13:00,2014-05-18 13:00,2014-05-25 13:00,2014-05-18 13:00,2014-05-25 13:00,2015-02-17 15:00,2015-02-24 15:00,,PT_Normal,,,,,qx74/KibJEaBCvGvUg5tew,XZexYUQK40m24xI/AXFP6g,,,N,0,0,,,2014-04-13 07:21,2014-04-14 16:04,admin,admin,
1874,141971,6971,40360,7842,0,N,N,N,CP_Phys,TT_Task,DT_FixedDrtn,TK_NotStart,CZA-TK-0721-1423,Inspection,8409,2362,0,50,0,8.660258,8.660258,50,0,0,0,,,,2015-01-08 15:00,2015-01-14 15:00,,2014-04-08 13:00,2014-04-14 13:00,2014-04-08 13:00,2014-04-14 13:00,2014-04-08 13:00,2014-04-14 13:00,2015-01-08 15:00,2015-01-14 15:00,,PT_Normal,,,,,NguGgT/0eky/T3ocKgICUA,0zfzSYhqLUqZ0HE8w1+biA,,,N,0,0,,,2014-04-13 07:21,2014-04-14 16:04,admin,admin,
1875,141972,6971,40360,7842,0,N,N,N,CP_Phys,TT_Task,DT_FixedDrtn,TK_NotStart,CZA-TK-0721-1422,Welding,8409,2362,0,40,0,43.301288,43.301288,40,40,0,40,,,,2015-01-10 15:00,2015-01-14 15:00,,2014-04-09 13:00,2014-04-14 13:00,2014-04-09 13:00,2014-04-14 13:00,2014-04-09 13:00,2014-04-14 13:00,2015-01-10 15:00,2015-01-14 15:00,,PT_Normal,,,,,hyCALxCqKU2qOoJ09vu1Tw,F+Y8OJbxoUKYpnHXQKiR0Q,,,N,0,0,,,2014-04-13 07:21,2014-04-14 17:03,admin,admin,
1876,141973,6971,40360,7842,0,N,N,N,CP_Phys,TT_Task,DT_FixedDrtn,TK_NotStart,CZA-TK-0721-1421,"Cutting, Installation and Fit-up",8409,2362,0,10,0,34.641032,34.641032,10,10,0,10,,,,2015-01-08 15:00,2015-01-10 15:00,,2014-04-08 13:00,2014-04-09 13:00,2014-04-08 13:00,2014-04-09 13:00,2014-04-08 13:00,2014-04-09 13:00,2015-01-08 15:00,2015-01-10 15:00,,PT_Normal,,,,,4flAJdHDwEebaviPyhHd5Q,xfWZSykn9US3GCleI+x61Q,,,N,0,0,,,2014-04-13 07:21,2014-04-14 17:03,admin,admin,
1877,141974,6971,40361,7842,0,N,N,N,CP_Phys,TT_Task,DT_FixedDrtn,TK_NotStart,CZA-TK-0721-1424,Laying & Fit-up,8409,2362,0,20,0,0,0,20,20,0,20,,,,2015-01-14 15:00,2015-01-17 15:00,,2014-04-14 13:00,2014-04-16 13:00,2014-04-14 13:00,2014-04-16 13:00,2014-04-14 13:00,2014-04-16 13:00,2015-01-14 15:00,2015-01-17 15:00,,PT_Normal,,,,,U8/lHkVhm0CCwPaLkV7/fg,KssNPIm1jk+K2A5sKfz/0A,,,N,0,0,,,2014-04-13 07:21,2014-04-14 16:04,admin,admin,
1878,141975,6971,40361,7842,0,N,N,N,CP_Phys,TT_Task,DT_FixedDrtn,TK_NotStart,CZA-TK-0721-1425,Welding,8409,2362,0,110,0,0,0,110,110,0,110,,,,2015-01-17 15:00,2015-01-29 15:00,,2014-04-16 13:00,2014-04-29 13:00,2014-04-16 13:00,2014-04-29 13:00,2014-04-16 13:00,2014-04-29 13:00,2015-01-17 15:00,2015-01-29 15:00,,PT_Normal,,,,,oSSvEfdXyUu0CPN2wAC8vg,dPx7ur5X4E68wCw4yWHMeA,,,N,0,0,,,2014-04-13 07:21,2014-04-14 16:04,admin,admin,
1879,141976,6971,40361,7842,0,N,N,N,CP_Phys,TT_Task,DT_FixedDrtn,TK_NotStart,CZA-TK-0721-1426,Inspection,8409,2362,0,130,0,0,0,130,0,0,0,,,,2015-01-14 15:00,2015-01-29 15:00,,2014-04-14 13:00,2014-04-29 13:00,2014-04-14 13:00,2014-04-29 13:00,2014-04-14 13:00,2014-04-29 13:00,2015-01-14 15:00,2015-01-29 15:00,,PT_Normal,,,,,S3lt42PnWEe4JCPvaZX8Mg,rQ2aH2W5tEWE1l2GduFY7A,,,N,0,0,,,2014-04-13 07:21,2014-04-14 16:04,admin,admin,
1880,141977,6971,39985,7842,0,N,N,N,CP_Phys,TT_Task,DT_FixedDrtn,TK_NotStart,CZA-TK-0721-1470,"Blasting and Painting Inside, Outside and Bottom Plates",8409,1790,0,140,0,3400.196738,3400.196738,140,0,0,0,,,,2015-06-03 15:00,2015-06-20 15:00,,2014-11-06 15:00,2014-11-23 15:00,2014-11-06 15:00,2014-11-23 15:00,2014-11-06 15:00,2014-11-23 15:00,2015-06-03 15:00,2015-06-20 15:00,,PT_Normal,,,,,C63Ec3p/DkC7AE0IAsdYEQ,OvqmMVFxlEK678KEdYnIiw,,,N,0,0,,,2014-04-13 07:21,2014-04-14 17:03,admin,admin,
1881,141978,6971,40054,7842,0,N,N,N,CP_Phys,TT_Task,DT_FixedDrtn,TK_NotStart,CZA-TK-0721-1471,Tank Calibration,8409,1790,0,50,0,1133.398912,1133.398912,50,0,0,0,,,,2015-06-20 15:00,2015-06-25 15:00,,2014-11-23 15:00,2014-11-29 15:00,2014-11-23 15:00,2014-11-29 15:00,2014-11-23 15:00,2014-11-29 15:00,2015-06-20 15:00,2015-06-25 15:00,,PT_Normal,,,,,KqZxCUPWDUeQNUpYYbQMcw,zmo2vg7ZGU+DqpBVjMMEaQ,,,N,0,0,,,2014-04-13 07:21,2014-04-15 07:43,admin,admin,
1882,141979,6971,40054,7842,0,N,N,N,CP_Phys,TT_Task,DT_FixedDrtn,TK_NotStart,CZA-TK-0721-1472,Tank Handover,8409,1790,958,20,0,1133.398912,1133.398912,20,0,0,0,,,,2015-06-25 15:00,2015-06-28 15:00,,2014-11-29 15:00,2014-12-01 15:00,2014-11-29 15:00,2014-12-01 15:00,2014-11-29 15:00,2014-12-01 15:00,2015-06-25 15:00,2015-06-28 15:00,,PT_Normal,,,,,TEL6+M9htEymvZvILrWJ5A,hPk0ZARCYUOWkYAJEAFNlA,,,N,0,0,,,2014-04-13 07:21,2014-04-15 07:43,admin,admin,
1883,141980,6971,40114,7842,0,N,N,N,CP_Phys,TT_Task,DT_FixedDrtn,TK_NotStart,CZA-TK-0721-1397,"Cutting, Fit-up and Welding  of Pontoon",8481,3768,0,100,0,1512.681,1512.681,100,0,0,0,,,,2015-03-08 11:00,2015-03-19 11:00,,2013-12-23 13:00,2014-01-04 13:00,2013-12-23 13:00,2014-01-04 13:00,2013-12-23 13:00,2014-01-04 13:00,2015-03-08 11:00,2015-03-19 11:00,,PT_Normal,,,,,K9x8DHW+v0ehGK6XVprSYQ,q8XrCAwSSUOn5cKgbYfG3A,,,N,0,0,,,2014-04-13 07:21,2014-04-14 17:03,admin,admin,
1884,141981,6971,40114,7842,0,N,N,N,CP_Phys,TT_Task,DT_FixedDrtn,TK_NotStart,CZA-TK-0721-1398,Cutting of Floating Roof Legs and Manholes,8481,3768,0,40,0,0,0,40,0,0,0,,,,2015-03-10 15:00,2015-03-15 15:00,,2013-12-26 07:00,2013-12-30 17:00,2013-12-26 07:00,2013-12-30 17:00,2013-12-26 07:00,2013-12-30 17:00,2015-03-10 15:00,2015-03-15 15:00,,PT_Normal,,,,,0G3QrhYxYE26S3BgTL0hpA,PU5OqBcfvkim6ZTZB3OD9Q,,,N,0,0,,,2014-04-13 07:21,2014-04-14 17:03,admin,admin,
1885,141982,6971,40114,7842,0,N,N,N,CP_Phys,TT_Task,DT_FixedDrtn,TK_NotStart,CZA-TK-0721-1399,"Cutting, Bevelling & Rolling Shell No.4",8481,3768,0,10,0,226.86,226.86,10,0,0,0,,,,2015-03-15 15:00,2015-03-16 15:00,,2013-12-31 07:00,2013-12-31 17:00,2013-12-31 07:00,2013-12-31 17:00,2013-12-31 07:00,2013-12-31 17:00,2015-03-15 15:00,2015-03-16 15:00,,PT_Normal,,,,,iL43UXYUC0O+oHipq1HNnA,DJqQCKcqCkm13UmYE88yeQ,,,N,0,0,,,2014-04-13 07:21,2014-04-14 17:03,admin,admin,
1886,141983,6971,40114,7842,0,N,N,N,CP_Phys,TT_Task,DT_FixedDrtn,TK_NotStart,CZA-TK-0721-1400,"Cutting, Bevelling & Rolling Shell No.5",8481,3768,0,10,0,226.86,226.86,10,0,0,0,,,,2015-03-15 15:00,2015-03-16 15:00,,2013-12-31 07:00,2013-12-31 17:00,2013-12-31 07:00,2013-12-31 17:00,2013-12-31 07:00,2013-12-31 17:00,2015-03-15 15:00,2015-03-16 15:00,,PT_Normal,,,,,NOJc9fanLEGswqSvkVet1g,ADY3kg8x0kKIEmGBd0MZdw,,,N,0,0,,,2014-04-13 07:21,2014-04-14 17:03,admin,admin,
1887,141984,6971,40114,7842,0,N,N,N,CP_Phys,TT_Task,DT_FixedDrtn,TK_NotStart,CZA-TK-0721-1401,"Cutting, Bevelling & Rolling Shell No.6",8481,3768,0,10,0,49.14,49.14,10,0,0,0,,,,2015-03-16 15:00,2015-03-17 15:00,,2014-01-01 07:00,2014-01-01 17:00,2014-01-01 07:00,2014-01-01 17:00,2014-01-01 07:00,2014-01-01 17:00,2015-03-16 15:00,2015-03-17 15:00,,PT_Normal,,,,,JnDolysIx0OxMQ1FnWS1zg,DyuLL6OUdEGgbrYzEtScQg,,,N,0,0,,,2014-04-13 07:21,2014-04-14 17:03,admin,admin,
1888,141985,6971,40114,7842,0,N,N,N,CP_Phys,TT_Task,DT_FixedDrtn,TK_NotStart,CZA-TK-0721-1402,"Cutting, Bevelling & Rolling Shell no.7",8481,3768,0,10,0,205.92,205.92,10,0,0,0,,,,2015-03-17 15:00,2015-03-18 15:00,,2014-01-02 07:00,2014-01-02 17:00,2014-01-02 07:00,2014-01-02 17:00,2014-01-02 07:00,2014-01-02 17:00,2015-03-17 15:00,2015-03-18 15:00,,PT_Normal,,,,,DwnV8hW3fUivjoK5B2se8Q,ve+BpT6IMEaSOj8wq44KRA,,,N,0,0,,,2014-04-13 07:21,2014-04-14 17:03,admin,admin,
1889,141986,6971,40114,7842,0,N,N,N,CP_Phys,TT_Task,DT_FixedDrtn,TK_NotStart,CZA-TK-0721-1403,"Cutting, Fit-up & Welding Roof Structures & Compression Ring",8481,3768,0,60,0,426.2298,426.2298,60,0,0,0,,,,2015-03-18 15:00,2015-03-25 15:00,,2014-01-04 07:00,2014-01-09 17:00,2014-01-04 07:00,2014-01-09 17:00,2014-01-04 07:00,2014-01-09 17:00,2015-03-18 15:00,2015-03-25 15:00,,PT_Normal,,,,,y+CR2amCk0mgarHQ/jTotw,TTETVJbqwkGc3Hw6CwD7vQ,,,N,0,0,,,2014-04-13 07:21,2014-04-14 17:03,admin,admin,
1890,141987,6971,40114,7842,0,N,N,N,CP_Phys,TT_Task,DT_FixedDrtn,TK_NotStart,CZA-TK-0721-1404,Cutting of Roof Plates,8481,3768,0,20,0,540.8826,540.8826,20,0,0,0,,,,2015-03-25 15:00,2015-03-28 15:00,,2014-01-11 07:00,2014-01-12 17:00,2014-01-11 07:00,2014-01-12 17:00,2014-01-11 07:00,2014-01-12 17:00,2015-03-25 15:00,2015-03-28 15:00,,PT_Normal,,,,,8EjESA4qgUu3PSFJkzrZ/g,mD1UJ9JL1kaDah+LrjHZBQ,,,N,0,0,,,2014-04-13 07:21,2014-04-14 17:03,admin,admin,
1891,141988,6971,40114,7842,0,N,N,N,CP_Phys,TT_Task,DT_FixedDrtn,TK_NotStart,CZA-TK-0721-1405,"Cutting, Fit-up & Welding Roof Platform, Gratings and Handrails",8481,3768,0,100,0,0,0,100,0,0,0,,,,2015-03-25 15:00,2015-04-06 15:00,,2014-01-11 07:00,2014-01-21 17:00,2014-01-11 07:00,2014-01-21 17:00,2014-01-11 07:00,2014-01-21 17:00,2015-03-25 15:00,2015-04-06 15:00,,PT_Normal,,,,,jW/dlXU+8Uu+5ZkTfWAJTg,afmF+SsgWUGYe/81Ivk6fQ,,,N,0,0,,,2014-04-13 07:21,2014-04-14 17:03,admin,admin,
1892,141989,6971,40114,7842,0,N,N,N,CP_Phys,TT_Task,DT_FixedDrtn,TK_NotStart,CZA-TK-0721-1406,"Cutting, Fit-up and Welding of Stairways",8481,3768,0,70,0,0,0,70,0,0,0,,,,2015-04-06 15:00,2015-04-14 15:00,,2014-01-22 07:00,2014-01-29 17:00,2014-01-22 07:00,2014-01-29 17:00,2014-01-22 07:00,2014-01-29 17:00,2015-04-06 15:00,2015-04-14 15:00,,PT_Normal,,,,,hvEs06lYmEaBCgm+ZZoy/g,4TuKPXFkEU2eROX0U9htrg,,,N,0,0,,,2014-04-13 07:21,2014-04-14 17:03,admin,admin,
1893,141990,6971,40114,7842,0,N,N,N,CP_Phys,TT_Task,DT_FixedDrtn,TK_NotStart,CZA-TK-0721-1407,"Cutting, Fit-up and Welding of Roof Nozzles, Manholes and Other Appurtanances",8481,3768,1406,50,0,0,0,50,0,0,0,,,,2015-04-14 15:00,2015-04-20 15:00,,2014-01-30 07:00,2014-02-04 17:00,2014-01-30 07:00,2014-02-04 17:00,2014-01-30 07:00,2014-02-04 17:00,2015-04-14 15:00,2015-04-20 15:00,,PT_Normal,,,,,H8kWasJWaEid+cxIF6FRLg,ln4p7Nci3Eaws92UHxq1JQ,,,N,0,0,,,2014-04-13 07:21,2014-04-14 17:03,admin,admin,
1894,141991,6971,40114,7842,0,N,N,N,CP_Phys,TT_Task,DT_FixedDrtn,TK_NotStart,CZA-TK-0721-1391,Cutting of Annular Plates and Bottom Plates,8481,3228,0,10,0,511.08,511.08,10,0,0,0,,,,2014-12-25 15:00,2014-12-27 15:00,,2013-12-15 07:00,2013-12-15 17:00,2013-12-15 07:00,2013-12-15 17:00,2013-12-15 07:00,2013-12-15 17:00,2014-12-25 15:00,2014-12-27 15:00,,PT_Normal,,,,,4U2ADvo0yEKSrmG+J1Jc6A,ErBFBh5xQkaxLu+t+zcnUA,,,N,0,0,,,2014-04-13 07:21,2014-04-14 17:03,admin,admin,
1895,141992,6971,40114,7842,0,N,N,N,CP_Phys,TT_Task,DT_FixedDrtn,TK_NotStart,CZA-TK-0721-1392,"Cutting,Bevelling & Rolling Shell No. 1",8481,3768,0,10,0,293.91,293.91,10,0,0,0,,,,2015-02-28 15:00,2015-03-01 15:00,,2013-12-16 07:00,2013-12-16 17:00,2013-12-16 07:00,2013-12-16 17:00,2013-12-16 07:00,2013-12-16 17:00,2015-02-28 15:00,2015-03-01 15:00,,PT_Normal,,,,,9XrsiRHyXkCq2zqhAbwUcQ,C21SAuT3UUiDEc69zHPATg,,,N,0,0,,,2014-04-13 07:21,2014-04-14 17:03,admin,admin,
1896,141993,6971,40114,7842,0,N,N,N,CP_Phys,TT_Task,DT_FixedDrtn,TK_NotStart,CZA-TK-0721-1393,"Cutting , Beveling & Rolling Shell No.2",8481,3768,0,10,0,264.57,264.57,10,0,0,0,,,,2015-03-01 15:00,2015-03-02 15:00,,2013-12-17 07:00,2013-12-17 17:00,2013-12-17 07:00,2013-12-17 17:00,2013-12-17 07:00,2013-12-17 17:00,2015-03-01 15:00,2015-03-02 15:00,,PT_Normal,,,,,TBjCvn5kmUGWm1dVtFj5Ow,DhnhQ+DCv0WMKEJCovrfJA,,,N,0,0,,,2014-04-13 07:21,2014-04-14 17:03,admin,admin,
1897,141994,6971,40114,7842,0,N,N,N,CP_Phys,TT_Task,DT_FixedDrtn,TK_NotStart,CZA-TK-0721-1394,"Cutting, Fit-up and Weld of Shell Nozzles, Manholes & Other Appurtanances",8481,3768,0,50,0,39.5649,39.5649,50,0,0,0,,,,2015-03-02 15:00,2015-03-08 15:00,,2013-12-18 07:00,2013-12-23 17:00,2013-12-18 07:00,2013-12-23 17:00,2013-12-18 07:00,2013-12-23 17:00,2015-03-02 15:00,2015-03-08 15:00,,PT_Normal,,,,,hpVawzfSeUyVFFYFWjiSPA,lkeT/1bL9keFPQkaj2Hkqg,,,N,0,0,,,2014-04-13 07:21,2014-04-14 17:03,admin,admin,
1898,141995,6971,40114,7842,0,N,N,N,CP_Phys,TT_Task,DT_FixedDrtn,TK_NotStart,CZA-TK-0721-1395,"Cutting, Bevelling  & Rolling Shell No.3",8481,3768,0,10,0,226.86,226.86,10,0,0,0,,,,2015-03-04 11:00,2015-03-05 11:00,,2013-12-19 13:00,2013-12-21 13:00,2013-12-19 13:00,2013-12-21 13:00,2013-12-19 13:00,2013-12-21 13:00,2015-03-04 11:00,2015-03-05 11:00,,PT_Normal,,,,,DXXaUB3pf06a56mgaiWqvQ,6H29kC5YC0u5uwYuwHr16g,,,N,0,0,,,2014-04-13 07:21,2014-04-14 17:03,admin,admin,
1899,141996,6971,40114,7842,0,N,N,N,CP_Phys,TT_Task,DT_FixedDrtn,TK_NotStart,CZA-TK-0721-1396,Cutting of Floating Roof Plates,8481,3768,0,20,0,77.2584,77.2584,20,0,0,0,,,,2015-03-05 11:00,2015-03-08 11:00,,2013-12-21 13:00,2013-12-23 13:00,2013-12-21 13:00,2013-12-23 13:00,2013-12-21 13:00,2013-12-23 13:00,2015-03-05 11:00,2015-03-08 11:00,,PT_Normal,,,,,vl1BnqoImUqznSZAu2BQig,ApyTh4ONh0Gak7cGGCmRmw,,,N,0,0,,,2014-04-13 07:21,2014-04-14 17:03,admin,admin,
1900,141997,6971,39989,7842,0,N,N,N,CP_Phys,TT_Task,DT_FixedDrtn,TK_NotStart,CZA-TK-0705-1470,Cutting of Annular Plates,8484,3228,0,30,0,402.7824,402.7824,30,0,0,0,,,,2015-01-04 15:00,2015-01-07 15:00,,2013-12-24 07:00,2013-12-26 17:00,2013-12-24 07:00,2013-12-26 17:00,2013-12-24 07:00,2013-12-26 17:00,2015-01-04 15:00,2015-01-07 15:00,,PT_Normal,,,,,alxmG1PzW0OKmvPg7EHKoQ,shmBK2bcO0CJYQAdzAkvcA,,,N,0,0,,,2014-04-13 07:21,2014-04-14 17:03,admin,admin,
1901,141998,6971,39989,7842,0,N,N,N,CP_Phys,TT_Task,DT_FixedDrtn,TK_NotStart,CZA-TK-0705-1480,Cutting of Bottom Plates & Compression Ring,8484,3568,0,30,0,1577.1048,1577.1048,30,0,0,0,,,,2015-02-12 15:00,2015-02-16 15:00,,2013-12-24 07:00,2013-12-26 17:00,2013-12-24 07:00,2013-12-26 17:00,2013-12-24 07:00,2013-12-26 17:00,2015-02-12 15:00,2015-02-16 15:00,,PT_Normal,,,,,dZQQCNJjD0e4fGHqAjhMsg,wylrnourfUCX+JOJLio1CA,,,N,0,0,,,2014-04-13 07:21,2014-04-14 17:03,admin,admin,
1902,141999,6971,39989,7842,0,N,N,N,CP_Phys,TT_Task,DT_FixedDrtn,TK_NotStart,CZA-TK-0705-1490,"Cutting, Bevelling & Rolling  Shell No.8",8484,3568,0,20,0,223.4526,223.4526,20,0,0,0,,,,2015-02-12 15:00,2015-02-15 15:00,,2013-12-24 07:00,2013-12-25 17:00,2013-12-24 07:00,2013-12-25 17:00,2013-12-24 07:00,2013-12-25 17:00,2015-02-12 15:00,2015-02-15 15:00,,PT_Normal,,,,,b8S2dmGPIEy+5Dr/kuJnTQ,0pZo3OhGa0CCtHtmiHfsKA,,,N,0,0,,,2014-04-13 07:21,2014-04-14 17:03,admin,admin,
1903,142000,6971,39989,7842,0,N,N,N,CP_Phys,TT_Task,DT_FixedDrtn,TK_NotStart,CZA-TK-0705-1500,"Cutting, Bevelling and Rolling Shell No.9",8484,3568,0,20,0,595.8741,595.8741,20,0,0,0,,,,2015-02-12 15:00,2015-02-15 15:00,,2013-12-24 07:00,2013-12-25 17:00,2013-12-24 07:00,2013-12-25 17:00,2013-12-24 07:00,2013-12-25 17:00,2015-02-12 15:00,2015-02-15 15:00,,PT_Normal,,,,,HuYcO5NO5EigDgmjtwehjA,DdUSoOxJQkyM9O2UN6lRRA,,,N,0,0,,,2014-04-13 07:21,2014-04-14 17:03,admin,admin,
1904,142001,6971,39989,7842,0,N,N,N,CP_Phys,TT_Task,DT_FixedDrtn,TK_NotStart,CZA-TK-0705-1510,Cutting of Floating Deck Plate,8484,3568,0,50,0,1181.043,1181.043,50,0,0,0,,,,2015-02-15 15:00,2015-02-21 15:00,,2013-12-26 07:00,2013-12-31 17:00,2013-12-26 07:00,2013-12-31 17:00,2013-12-26 07:00,2013-12-31 17:00,2015-02-15 15:00,2015-02-21 15:00,,PT_Normal,,,,,2zAxLBkxf0ajPLZ9GANa8g,6EVMlw3vPUO/BxAKV+SzOA,,,N,0,0,,,2014-04-13 07:21,2014-04-14 17:03,admin,admin,
1905,142002,6971,39989,7842,0,N,N,N,CP_Phys,TT_Task,DT_FixedDrtn,TK_NotStart,CZA-TK-0705-1520,Cutting of Pontoon,8484,3568,0,100,0,905.511,905.511,100,0,0,0,,,,2015-02-17 11:00,2015-03-01 11:00,,2013-12-28 13:00,2014-01-08 13:00,2013-12-28 13:00,2014-01-08 13:00,2013-12-28 13:00,2014-01-08 13:00,2015-02-17 11:00,2015-03-01 11:00,,PT_Normal,,,,,jzANjbdt0UWuFQ/MIzOiFQ,rGalScDjsEC0bv+qOZGARg,,,N,0,0,,,2014-04-13 07:21,2014-04-14 17:03,admin,admin,
1906,142003,6971,39989,7842,0,N,N,N,CP_Phys,TT_Task,DT_FixedDrtn,TK_NotStart,CZA-TK-0705-1530,"Cutting, Fit-up, Roof legs and Manholes",8484,3568,0,70,0,0,0,70,0,0,0,,,,2015-02-19 07:00,2015-02-26 17:00,,2013-12-30 09:00,2014-01-07 09:00,2013-12-30 09:00,2014-01-07 09:00,2013-12-30 09:00,2014-01-07 09:00,2015-02-19 07:00,2015-02-26 17:00,,PT_Normal,,,,,u+6AVfiMy0Gnbtsm8WeDpQ,AeiFqYblykylfRoajAy7xg,,,N,0,0,,,2014-04-13 07:21,2014-04-14 17:03,admin,admin,
1907,142004,6971,39989,7842,0,N,N,N,CP_Phys,TT_Task,DT_FixedDrtn,TK_NotStart,CZA-TK-0705-1540,"Cutting, Fit-up, and Welding of Roof Structure",8484,3568,0,70,0,2403.444,2403.444,70,0,0,0,,,,2015-02-28 07:00,2015-03-07 17:00,,2014-01-07 09:00,2014-01-15 09:00,2014-01-07 09:00,2014-01-15 09:00,2014-01-07 09:00,2014-01-15 09:00,2015-02-28 07:00,2015-03-07 17:00,,PT_Normal,,,,,2O2T6mWjEUetO6eLacT0KQ,CxG6kipTm0GqfMkPWre2Pg,,,N,0,0,,,2014-04-13 07:21,2014-04-14 17:03,admin,admin,
1908,142005,6971,39989,7842,0,N,N,N,CP_Phys,TT_Task,DT_FixedDrtn,TK_NotStart,CZA-TK-0705-1570,"Cutting, Fit-up & Welding of Roof Platform, Gratings and Handrails",8484,3568,0,120,0,0,0,120,0,0,0,,,,2015-03-09 13:00,2015-03-23 13:00,,2014-01-16 15:00,2014-01-30 15:00,2014-01-16 15:00,2014-01-30 15:00,2014-01-16 15:00,2014-01-30 15:00,2015-03-09 13:00,2015-03-23 13:00,,PT_Normal,,,,,X2IsemvFn0qMtHKUGbUoPA,jvgl9ZQveEqxPuwfX0b0cg,,,N,0,0,,,2014-04-13 07:21,2014-04-14 17:03,admin,admin,
1909,142006,6971,39989,7842,0,N,N,N,CP_Phys,TT_Task,DT_FixedDrtn,TK_NotStart,CZA-TK-0705-1580,"Cutting, Bevelling and Rolling Shell No.7",8484,3568,0,20,0,595.8741,595.8741,20,0,0,0,,,,2015-03-16 09:00,2015-03-18 09:00,,2014-01-23 11:00,2014-01-26 11:00,2014-01-23 11:00,2014-01-26 11:00,2014-01-23 11:00,2014-01-26 11:00,2015-03-16 09:00,2015-03-18 09:00,,PT_Normal,,,,,2v0SfaYXfEekczgCfIzb3A,FcWdcVdUs0mUjqNd+3NBSQ,,,N,0,0,,,2014-04-13 07:21,2014-04-14 17:03,admin,admin,
1910,142007,6971,39989,7842,0,N,N,N,CP_Phys,TT_Task,DT_FixedDrtn,TK_NotStart,CZA-TK-0705-1590,"Cutting, Bevelling and Rolling Shell No.6",8484,3568,0,20,0,595.8741,595.8741,20,0,0,0,,,,2015-03-16 09:00,2015-03-18 09:00,,2014-01-23 11:00,2014-01-26 11:00,2014-01-23 11:00,2014-01-26 11:00,2014-01-23 11:00,2014-01-26 11:00,2015-03-16 09:00,2015-03-18 09:00,,PT_Normal,,,,,pjptgItwrkuyeVxf+LXPZg,Y661+SUAeUWfKg03al/aEQ,,,N,0,0,,,2014-04-13 07:21,2014-04-14 17:03,admin,admin,
1911,142008,6971,39989,7842,0,N,N,N,CP_Phys,TT_Task,DT_FixedDrtn,TK_NotStart,CZA-TK-0705-1600,"Cutting, Bevelling and Rolling Shell No.5",8484,3568,0,20,0,744.8769,744.8769,20,0,0,0,,,,2015-03-18 09:00,2015-03-21 09:00,,2014-01-26 11:00,2014-01-28 11:00,2014-01-26 11:00,2014-01-28 11:00,2014-01-26 11:00,2014-01-28 11:00,2015-03-18 09:00,2015-03-21 09:00,,PT_Normal,,,,,P568x01ky0aefQjDxDM+gQ,EPV0ZMgwe0+6sKs3a4dH2g,,,N,0,0,,,2014-04-13 07:21,2014-04-14 17:03,admin,admin,
1912,142009,6971,39989,7842,0,N,N,N,CP_Phys,TT_Task,DT_FixedDrtn,TK_NotStart,CZA-TK-0705-1610,"Cutting, Bevelling and Rolling Shell No.4",8484,3568,0,20,0,892.0929,892.0929,20,0,0,0,,,,2015-03-18 09:00,2015-03-21 09:00,,2014-01-26 11:00,2014-01-28 11:00,2014-01-26 11:00,2014-01-28 11:00,2014-01-26 11:00,2014-01-28 11:00,2015-03-18 09:00,2015-03-21 09:00,,PT_Normal,,,,,fPALj8zs50iLFOhgUIWeSw,ONe56sdZRkyF+UuexoAouQ,,,N,0,0,,,2014-04-13 07:21,2014-04-14 17:03,admin,admin,
1913,142010,6971,39989,7842,0,N,N,N,CP_Phys,TT_Task,DT_FixedDrtn,TK_NotStart,CZA-TK-0705-1620,"Cutting, Bevelling and Rolling Shell No.3",8484,3568,0,20,0,1117.4172,1117.4172,20,0,0,0,,,,2015-03-21 09:00,2015-03-23 09:00,,2014-01-28 11:00,2014-01-30 11:00,2014-01-28 11:00,2014-01-30 11:00,2014-01-28 11:00,2014-01-30 11:00,2015-03-21 09:00,2015-03-23 09:00,,PT_Normal,,,,,uJCcxDVniEK0r+Fnb1Fdmg,yrD70IHwmkScZU4ATt5j+Q,,,N,0,0,,,2014-04-13 07:21,2014-04-14 17:03,admin,admin,
1914,142011,6971,39989,7842,0,N,N,N,CP_Phys,TT_Task,DT_FixedDrtn,TK_NotStart,CZA-TK-0705-1630,"Cutting, Bevelling and Rolling Shell No.2",8484,3568,0,20,0,1266.4926,1266.4926,20,0,0,0,,,,2015-03-21 09:00,2015-03-23 09:00,,2014-01-28 11:00,2014-01-30 11:00,2014-01-28 11:00,2014-01-30 11:00,2014-01-28 11:00,2014-01-30 11:00,2015-03-21 09:00,2015-03-23 09:00,,PT_Normal,,,,,HKwfGwAozEaSS+9gTieM3Q,YkXm6V0rskqzR6hl+vHqNg,,,N,0,0,,,2014-04-13 07:21,2014-04-14 17:03,admin,admin,
1915,142012,6971,39989,7842,0,N,N,N,CP_Phys,TT_Task,DT_FixedDrtn,TK_NotStart,CZA-TK-0705-1640,"Cutting, Bevelling and Rolling Shell No.1",8484,3568,0,20,0,1524.3327,1524.3327,20,0,0,0,,,,2015-03-23 09:00,2015-03-25 09:00,,2014-01-30 11:00,2014-02-02 11:00,2014-01-30 11:00,2014-02-02 11:00,2014-01-30 11:00,2014-02-02 11:00,2015-03-23 09:00,2015-03-25 09:00,,PT_Normal,,,,,9nQ/S9AchUiPzSkNsVcmNw,DEZEo/Tx60muxYMtJEmeKA,,,N,0,0,,,2014-04-13 07:21,2014-04-14 17:03,admin,admin,
1916,142013,6971,39989,7842,0,N,N,N,CP_Phys,TT_Task,DT_FixedDrtn,TK_NotStart,CZA-TK-0705-1660,"Cutting, Fit-up & Welding of Shell Nozzles, Manholes and Other Appurtanances",8484,3568,0,70,0,83.1411,83.1411,70,0,0,0,,,,2015-03-25 09:00,2015-04-02 09:00,,2014-02-02 11:00,2014-02-10 11:00,2014-02-02 11:00,2014-02-10 11:00,2014-02-02 11:00,2014-02-10 11:00,2015-03-25 09:00,2015-04-02 09:00,,PT_Normal,,,,,9PBkdJBaLEei67BmAAMMIg,jT40r+Iq1EiwuUVVKJ6s4g,,,N,0,0,,,2014-04-13 07:21,2014-04-14 17:03,admin,admin,
1917,142014,6971,39989,7842,0,N,N,N,CP_Phys,TT_Task,DT_FixedDrtn,TK_NotStart,CZA-TK-0705-1670,"Cutting, Fit-up & Welding of Stairway Platform, Gratings and  Handrails",8484,3568,2406,60,0,0,0,60,0,0,0,,,,2015-03-26 15:00,2015-04-02 15:00,,2014-02-04 07:00,2014-02-10 17:00,2014-02-04 07:00,2014-02-10 17:00,2014-02-04 07:00,2014-02-10 17:00,2015-03-26 15:00,2015-04-02 15:00,,PT_Normal,,,,,bQzVRUR+ME2CVERSi4Q+lw,73tPqtSsGEKWB4VzYnlWqg,,,N,0,0,,,2014-04-13 07:21,2014-04-14 17:03,admin,admin,
1918,142015,6971,39989,7842,0,N,N,N,CP_Phys,TT_Task,DT_FixedDrtn,TK_NotStart,CZA-TK-0705-1550,Cutting of Roof Plates,8484,3568,0,20,0,2068.167,2068.167,20,0,0,0,,,,2015-03-08 07:00,2015-03-09 17:00,,2014-01-15 09:00,2014-01-18 09:00,2014-01-15 09:00,2014-01-18 09:00,2014-01-15 09:00,2014-01-18 09:00,2015-03-08 07:00,2015-03-09 17:00,,PT_Normal,,,,,qaYKpCWLO0qwYyK718tTGQ,u4nwUbPCwE+3UWcc4ws6yA,,,N,0,0,,,2014-04-13 07:21,2014-04-14 17:03,admin,admin,
1919,142016,6971,39989,7842,0,N,N,N,CP_Phys,TT_Task,DT_FixedDrtn,TK_NotStart,CZA-TK-0705-1560,"Cutting, Fit-up, & Welding of Roof Nozzles, Manholes & other Appurtanances",8484,3568,0,60,0,0,0,60,0,0,0,,,,2015-03-08 07:00,2015-03-14 17:00,,2014-01-15 09:00,2014-01-22 09:00,2014-01-15 09:00,2014-01-22 09:00,2014-01-15 09:00,2014-01-22 09:00,2015-03-08 07:00,2015-03-14 17:00,,PT_Normal,,,,,4bpTBuYXXE206n4Y3gqEXA,flUFSVHY4Eq1Jwf/CwDRQg,,,N,0,0,,,2014-04-13 07:21,2014-04-14 17:03,admin,admin,
1920,142017,6971,40159,7842,0,N,N,N,CP_Phys,TT_Task,DT_FixedDrtn,TK_NotStart,CZA-TK-0705-2060,Erection and Fit-up,8379,1162,0,40,0,0,0,40,240,0,240,,,,2015-01-03 15:00,2015-01-07 15:00,,2014-08-20 13:00,2014-08-25 13:00,2014-08-20 13:00,2014-08-25 13:00,2014-08-20 13:00,2014-08-25 13:00,2015-01-03 15:00,2015-01-07 15:00,,PT_Normal,,,,,LzkMZlFEi0mQegWUiQGTog,U0AJNDwBwkKD70zvGzUnng,,,N,0,0,,,2014-04-13 07:21,2014-04-14 16:04,admin,admin,
1921,142018,6971,40159,7842,0,N,N,N,CP_Phys,TT_Task,DT_FixedDrtn,TK_NotStart,CZA-TK-0705-2070,Welding,8379,1162,0,100,0,0,0,100,400,0,400,,,,2015-01-07 15:00,2015-01-19 15:00,,2014-08-25 13:00,2014-09-06 13:00,2014-08-25 13:00,2014-09-06 13:00,2014-08-25 13:00,2014-09-06 13:00,2015-01-07 15:00,2015-01-19 15:00,,PT_Normal,,,,,ephmgLK5gUu1vwLwGI9ncw,oihehVr49kWQ2bBVT+VCiQ,,,N,0,0,,,2014-04-13 07:21,2014-04-14 16:04,admin,admin,
1922,142019,6971,40159,7842,0,N,N,N,CP_Phys,TT_Task,DT_FixedDrtn,TK_NotStart,CZA-TK-0705-2080,Inspection,8379,1162,0,140,0,0,0,140,0,0,0,,,,2015-01-03 15:00,2015-01-19 15:00,,2014-08-20 13:00,2014-09-06 13:00,2014-08-20 13:00,2014-09-06 13:00,2014-08-20 13:00,2014-09-06 13:00,2015-01-03 15:00,2015-01-19 15:00,,PT_Normal,,,,,bJ6Di+N9Bk+DwxPdJbjlyQ,SBPy3AuGMUWTsvbkxCDqBA,,,N,0,0,,,2014-04-13 07:21,2014-04-14 16:04,admin,admin,
1923,142020,6971,40160,7842,0,N,N,N,CP_Phys,TT_Task,DT_FixedDrtn,TK_NotStart,CZA-TK-0705-1690,Laying and Fit-up,8379,1162,0,20,0,176.327978,176.327978,20,120,0,120,,,,2014-08-14 15:00,2014-08-17 15:00,,2014-04-01 13:00,2014-04-03 13:00,2014-04-01 13:00,2014-04-03 13:00,2014-04-01 13:00,2014-04-03 13:00,2014-08-14 15:00,2014-08-17 15:00,,PT_Normal,,,,,7+4hlkLjkky8QzOUe9nU8g,nG5dbLI1O0ixQzW2BmJFVg,,,N,0,0,,,2014-04-13 07:21,2014-04-14 16:04,admin,admin,
1924,142021,6971,40160,7842,0,N,N,N,CP_Phys,TT_Task,DT_FixedDrtn,TK_NotStart,CZA-TK-0705-1700,Welding,8379,1162,0,40,0,220.409972,220.409972,40,160,0,160,,,,2014-08-17 15:00,2014-08-21 15:00,,2014-04-03 13:00,2014-04-08 13:00,2014-04-03 13:00,2014-04-08 13:00,2014-04-03 13:00,2014-04-08 13:00,2014-08-17 15:00,2014-08-21 15:00,,PT_Normal,,,,,q684jIY7Qke1Dmbx1Zx9Cg,nPYXfRXvG0SjCvGki3a/iA,,,N,0,0,,,2014-04-13 07:21,2014-04-14 16:04,admin,admin,
1925,142022,6971,40160,7842,0,N,N,N,CP_Phys,TT_Task,DT_FixedDrtn,TK_NotStart,CZA-TK-0705-1710,Inspection,8379,1162,0,60,0,44.081994,44.081994,60,0,0,0,,,,2014-08-14 15:00,2014-08-21 15:00,,2014-04-01 13:00,2014-04-08 13:00,2014-04-01 13:00,2014-04-08 13:00,2014-04-01 13:00,2014-04-08 13:00,2014-08-14 15:00,2014-08-21 15:00,,PT_Normal,,,,,d42aqLDCu0CAtt+vpwq4lQ,3EX6lkZCN0Kz4+MYsktwLA,,,N,0,0,,,2014-04-13 07:21,2014-04-14 16:04,admin,admin,
1926,142023,6971,40131,7842,0,N,N,N,CP_Phys,TT_Task,DT_FixedDrtn,TK_NotStart,CZA-TK-0705-2360,Erection and Fit-up,8379,1162,0,30,0,0,0,30,180,0,180,,,,2015-04-02 15:00,2015-04-06 15:00,,2014-11-18 13:00,2014-11-22 13:00,2014-11-18 13:00,2014-11-22 13:00,2014-11-18 13:00,2014-11-22 13:00,2015-04-02 15:00,2015-04-06 15:00,,PT_Normal,,,,,J6o+rcoPYkG73r+l3MU5TA,V9YZQs5HXkCl9zrzOhr2mw,,,N,0,0,,,2014-04-13 07:21,2014-04-14 16:04,admin,admin,
1927,142024,6971,40131,7842,0,N,N,N,CP_Phys,TT_Task,DT_FixedDrtn,TK_NotStart,CZA-TK-0705-2370,Welding,8379,1162,0,70,0,0,0,70,280,0,280,,,,2015-04-06 15:00,2015-04-14 15:00,,2014-11-22 13:00,2014-11-30 13:00,2014-11-22 13:00,2014-11-30 13:00,2014-11-22 13:00,2014-11-30 13:00,2015-04-06 15:00,2015-04-14 15:00,,PT_Normal,,,,,gtVecSqh50GjXmmBGCAeEA,q79puxXPTEai8nNiPGHxsg,,,N,0,0,,,2014-04-13 07:21,2014-04-14 16:04,admin,admin,
1928,142025,6971,40131,7842,0,N,N,N,CP_Phys,TT_Task,DT_FixedDrtn,TK_NotStart,CZA-TK-0705-2380,Inspection,8379,1162,0,100,0,0,0,100,0,0,0,,,,2015-04-02 15:00,2015-04-14 15:00,,2014-11-18 13:00,2014-11-30 13:00,2014-11-18 13:00,2014-11-30 13:00,2014-11-18 13:00,2014-11-30 13:00,2015-04-02 15:00,2015-04-14 15:00,,PT_Normal,,,,,bPhCKfFa9kilXjVln872Mw,7RqlBWTijUGw9XNkRUoEig,,,N,0,0,,,2014-04-13 07:21,2014-04-14 16:04,admin,admin,
1929,142026,6971,40134,7842,0,N,N,N,CP_Phys,TT_Task,DT_FixedDrtn,TK_NotStart,CZA-TK-0705-1900,"Laying, Cutting all Holes and Fit-up",8379,1162,0,40,0,396.409881,396.409881,40,240,0,240,,,,2014-11-05 15:00,2014-11-10 15:00,,2014-06-23 13:00,2014-06-28 13:00,2014-06-23 13:00,2014-06-28 13:00,2014-06-23 13:00,2014-06-28 13:00,2014-11-05 15:00,2014-11-10 15:00,,PT_Normal,,,,,VZsbxCwEt0qG9JcSxdY4Lg,IoqBYoY/r0qpis3uaHA2rg,,,N,0,0,,,2014-04-13 07:21,2014-04-14 16:04,admin,admin,
1930,142027,6971,40134,7842,0,N,N,N,CP_Phys,TT_Task,DT_FixedDrtn,TK_NotStart,CZA-TK-0705-1910,Welding,8379,1202,40,110,0,495.512352,495.512352,110,440,0,440,,,,2014-11-10 15:00,2014-11-23 15:00,,2014-06-23 13:00,2014-07-06 13:00,2014-06-23 13:00,2014-07-06 13:00,2014-06-23 13:00,2014-07-06 13:00,2014-11-10 15:00,2014-11-23 15:00,,PT_Normal,,,,,1lY6g4CUM0Wuzc1TWPaeuw,wmTaeVHNF0itAfyykPyp/w,,,N,0,0,,,2014-04-13 07:21,2014-04-14 16:04,admin,admin,
1931,142028,6971,40134,7842,0,N,N,N,CP_Phys,TT_Task,DT_FixedDrtn,TK_NotStart,CZA-TK-0705-1920,Inspection,8379,1162,0,150,0,99.10247,99.10247,150,0,0,0,,,,2014-11-05 15:00,2014-11-23 15:00,,2014-06-23 13:00,2014-07-10 13:00,2014-06-23 13:00,2014-07-10 13:00,2014-06-23 13:00,2014-07-10 13:00,2014-11-05 15:00,2014-11-23 15:00,,PT_Normal,,,,,jWc6jwcMYU6UJNK1Vwgfxw,9Ax86evXdkqmG3oXkNRO6g,,,N,0,0,,,2014-04-13 07:21,2014-04-14 16:04,admin,admin,
1932,142029,6971,40139,7842,0,N,N,N,CP_Phys,TT_Task,DT_FixedDrtn,TK_NotStart,CZA-TK-0705-1930,Erection and Fit-up,8379,1162,0,30,0,1052.167175,1052.167175,30,180,0,180,,,,2014-11-23 15:00,2014-11-26 15:00,,2014-07-10 13:00,2014-07-14 13:00,2014-07-10 13:00,2014-07-14 13:00,2014-07-10 13:00,2014-07-14 13:00,2014-11-23 15:00,2014-11-26 15:00,,PT_Normal,,,,,IhWyCHQyEkSW+sIJ8uRGpg,Gtnt5poe4kOvEE9kRD+dPg,,,N,0,0,,,2014-04-13 07:21,2014-04-14 16:04,admin,admin,
1933,142030,6971,40139,7842,0,N,N,N,CP_Phys,TT_Task,DT_FixedDrtn,TK_NotStart,CZA-TK-0705-1940,Welding,8379,1162,0,50,0,1315.208969,1315.208969,50,200,0,200,,,,2014-11-26 15:00,2014-12-02 15:00,,2014-07-14 13:00,2014-07-20 13:00,2014-07-14 13:00,2014-07-20 13:00,2014-07-14 13:00,2014-07-20 13:00,2014-11-26 15:00,2014-12-02 15:00,,PT_Normal,,,,,a1FeHAegr0KX+K0Xo0B5uQ,jNixevfb5kKb0kIcs4cwww,,,N,0,0,,,2014-04-13 07:21,2014-04-14 16:04,admin,admin,
1934,142031,6971,40139,7842,0,N,N,N,CP_Phys,TT_Task,DT_FixedDrtn,TK_NotStart,CZA-TK-0705-1950,Inspection,8379,1162,0,80,0,263.041794,263.041794,80,0,0,0,,,,2014-11-23 15:00,2014-12-02 15:00,,2014-07-10 13:00,2014-07-20 13:00,2014-07-10 13:00,2014-07-20 13:00,2014-07-10 13:00,2014-07-20 13:00,2014-11-23 15:00,2014-12-02 15:00,,PT_Normal,,,,,HjnlOG+FLUuM5lMg0uJyYg,FtnswzIf6UWW1gs48EEbRg,,,N,0,0,,,2014-04-13 07:21,2014-04-14 16:04,admin,admin,
1935,142032,6971,40214,7842,0,N,N,N,CP_Phys,TT_Task,DT_FixedDrtn,TK_NotStart,CZA-TK-0705-1840,Erection and Fit-up,8379,1162,0,40,0,0,0,40,240,0,240,,,,2014-10-06 15:00,2014-10-11 15:00,,2014-05-24 13:00,2014-05-28 13:00,2014-05-24 13:00,2014-05-28 13:00,2014-05-24 13:00,2014-05-28 13:00,2014-10-06 15:00,2014-10-11 15:00,,PT_Normal,,,,,d0iUPCOk2Uqb/Tz0/4XRZA,bcs9fEhXDk+rwAEvpryxKQ,,,N,0,0,,,2014-04-13 07:21,2014-04-14 16:04,admin,admin,
1936,142033,6971,40214,7842,0,N,N,N,CP_Phys,TT_Task,DT_FixedDrtn,TK_NotStart,CZA-TK-0705-1850,Welding,8379,1162,0,60,0,0,0,60,240,0,240,,,,2014-10-11 15:00,2014-10-18 15:00,,2014-05-28 13:00,2014-06-04 13:00,2014-05-28 13:00,2014-06-04 13:00,2014-05-28 13:00,2014-06-04 13:00,2014-10-11 15:00,2014-10-18 15:00,,PT_Normal,,,,,CbecLuPibkOGN5jqm3horA,QHhgplcWFkupkFY8QHicOQ,,,N,0,0,,,2014-04-13 07:21,2014-04-14 16:04,admin,admin,
1937,142034,6971,40214,7842,0,N,N,N,CP_Phys,TT_Task,DT_FixedDrtn,TK_NotStart,CZA-TK-0705-1860,Inspection,8379,1162,0,100,0,0,0,100,0,0,0,,,,2014-10-06 15:00,2014-10-18 15:00,,2014-05-24 13:00,2014-06-04 13:00,2014-05-24 13:00,2014-06-04 13:00,2014-05-24 13:00,2014-06-04 13:00,2014-10-06 15:00,2014-10-18 15:00,,PT_Normal,,,,,KkqkLvnWwkmlTVsOkyjnsA,Vrn6wT8weUm7MvBZwA8Vow,,,N,0,0,,,2014-04-13 07:21,2014-04-14 16:04,admin,admin,
1938,142035,6971,40174,7842,0,N,N,N,CP_Phys,TT_Task,DT_FixedDrtn,TK_NotStart,CZA-TK-0705-1870,Laying and Fit-up,8379,1162,0,40,0,517.030843,517.030843,40,240,0,240,,,,2014-10-18 15:00,2014-10-22 15:00,,2014-06-04 13:00,2014-06-09 13:00,2014-06-04 13:00,2014-06-09 13:00,2014-06-04 13:00,2014-06-09 13:00,2014-10-18 15:00,2014-10-22 15:00,,PT_Normal,,,,,0MTy5Evh7ECGwBB4iJG0/g,EROWul20F0+mZn9Lr2U3oA,,,N,0,0,,,2014-04-13 07:21,2014-04-14 16:04,admin,admin,
1939,142036,6971,40174,7842,0,N,N,N,CP_Phys,TT_Task,DT_FixedDrtn,TK_NotStart,CZA-TK-0705-1880,Welding,8379,1162,0,120,0,646.288554,646.288554,120,480,0,480,,,,2014-10-22 15:00,2014-11-05 15:00,,2014-06-09 13:00,2014-06-23 13:00,2014-06-09 13:00,2014-06-23 13:00,2014-06-09 13:00,2014-06-23 13:00,2014-10-22 15:00,2014-11-05 15:00,,PT_Normal,,,,,qooRBOJPP0i0V90TVVczJQ,NWdoEBk9pUyVZeGn8XDCMg,,,N,0,0,,,2014-04-13 07:21,2014-04-14 16:04,admin,admin,
1940,142037,6971,40174,7842,0,N,N,N,CP_Phys,TT_Task,DT_FixedDrtn,TK_NotStart,CZA-TK-0705-1890,Inspection,8379,1162,0,160,0,129.257711,129.257711,160,0,0,0,,,,2014-10-18 15:00,2014-11-05 15:00,,2014-06-04 13:00,2014-06-23 13:00,2014-06-04 13:00,2014-06-23 13:00,2014-06-04 13:00,2014-06-23 13:00,2014-10-18 15:00,2014-11-05 15:00,,PT_Normal,,,,,lo0tudnuB0eVozct27FXfg,7+ruqHHQn0G1Ac6+IFb2nQ,,,N,0,0,,,2014-04-13 07:21,2014-04-14 16:04,admin,admin,
1941,142038,6971,40175,7842,0,N,N,N,CP_Phys,TT_Task,DT_FixedDrtn,TK_NotStart,CZA-TK-0705-2240,"Jacking, Erection and Fit-up",8379,1162,0,20,0,554.438523,554.438523,20,120,0,120,,,,2015-03-07 15:00,2015-03-09 15:00,,2014-10-22 13:00,2014-10-25 13:00,2014-10-22 13:00,2014-10-25 13:00,2014-10-22 13:00,2014-10-25 13:00,2015-03-07 15:00,2015-03-09 15:00,,PT_Normal,,,,,iG7x82pDmUKD7TMEwz4knQ,G6LzG30MpEOAjf5P/Jgorw,,,N,0,0,,,2014-04-13 07:21,2014-04-14 16:04,admin,admin,
1942,142039,6971,40175,7842,0,N,N,N,CP_Phys,TT_Task,DT_FixedDrtn,TK_NotStart,CZA-TK-0705-2250,Welding,8379,1162,0,60,0,693.048154,693.048154,60,300,0,300,,,,2015-03-09 15:00,2015-03-16 15:00,,2014-10-25 13:00,2014-11-01 13:00,2014-10-25 13:00,2014-11-01 13:00,2014-10-25 13:00,2014-11-01 13:00,2015-03-09 15:00,2015-03-16 15:00,,PT_Normal,,,,,NDkXWiPKkk+trLaN/pR5Qw,R71eKfqOfkW0sJHwvcUhpA,,,N,0,0,,,2014-04-13 07:21,2014-04-14 16:04,admin,admin,
1943,142040,6971,40175,7842,0,N,N,N,CP_Phys,TT_Task,DT_FixedDrtn,TK_NotStart,CZA-TK-0705-2260,Inspection,8379,1162,0,80,0,138.609631,138.609631,80,0,0,0,,,,2015-03-07 15:00,2015-03-16 15:00,,2014-10-22 13:00,2014-11-01 13:00,2014-10-22 13:00,2014-11-01 13:00,2014-10-22 13:00,2014-11-01 13:00,2015-03-07 15:00,2015-03-16 15:00,,PT_Normal,,,,,LKxPjYAaoES+ZHEhYR8RUw,WsNrumyrqkCB5W6rF6newg,,,N,0,0,,,2014-04-13 07:21,2014-04-14 16:04,admin,admin,
1944,142041,6971,40285,7842,0,N,N,N,CP_Phys,TT_Task,DT_FixedDrtn,TK_NotStart,CZA-TK-0705-2270,"Jacking, Erection and Fit-up",8379,1162,0,20,0,667.314417,667.314417,20,120,0,120,,,,2015-03-16 15:00,2015-03-18 15:00,,2014-11-01 13:00,2014-11-03 13:00,2014-11-01 13:00,2014-11-03 13:00,2014-11-01 13:00,2014-11-03 13:00,2015-03-16 15:00,2015-03-18 15:00,,PT_Normal,,,,,y1y3BIqEJk+ITSgP78EQug,JOR3W4VdN06gIg/ZOvQO6Q,,,N,0,0,,,2014-04-13 07:21,2014-04-14 16:04,admin,admin,
1945,142042,6971,40285,7842,0,N,N,N,CP_Phys,TT_Task,DT_FixedDrtn,TK_NotStart,CZA-TK-0705-2280,Welding,8379,1162,0,60,0,834.143021,834.143021,60,300,0,300,,,,2015-03-18 15:00,2015-03-25 15:00,,2014-11-03 13:00,2014-11-10 13:00,2014-11-03 13:00,2014-11-10 13:00,2014-11-03 13:00,2014-11-10 13:00,2015-03-18 15:00,2015-03-25 15:00,,PT_Normal,,,,,GVFW62AuCEKtNSQNpMP1ag,xtp5u+mcDUSKhFhQN1lTOA,,,N,0,0,,,2014-04-13 07:21,2014-04-14 16:04,admin,admin,
1946,142043,6971,40285,7842,0,N,N,N,CP_Phys,TT_Task,DT_FixedDrtn,TK_NotStart,CZA-TK-0705-2290,Inspection,8379,1162,0,80,0,166.828604,166.828604,80,0,0,0,,,,2015-03-16 15:00,2015-03-25 15:00,,2014-11-01 13:00,2014-11-10 13:00,2014-11-01 13:00,2014-11-10 13:00,2014-11-01 13:00,2014-11-10 13:00,2015-03-16 15:00,2015-03-25 15:00,,PT_Normal,,,,,cyK0+Mnoe0Gp0JPpZWNW1g,D+YiLfHAukuplA6+dgKOeg,,,N,0,0,,,2014-04-13 07:21,2014-04-14 16:04,admin,admin,
1947,142044,6971,40177,7842,0,N,N,N,CP_Phys,TT_Task,DT_FixedDrtn,TK_NotStart,CZA-TK-0705-2150,"Jacking,Erection and Fit-up",8379,1162,0,20,0,326.088323,326.088323,20,120,0,120,,,,2015-02-07 15:00,2015-02-09 15:00,,2014-09-24 13:00,2014-09-27 13:00,2014-09-24 13:00,2014-09-27 13:00,2014-09-24 13:00,2014-09-27 13:00,2015-02-07 15:00,2015-02-09 15:00,,PT_Normal,,,,,+hzfCn4YXEug7FzY3KzMCw,X5+KendvNEi/fDEoEVc/gQ,,,N,0,0,,,2014-04-13 07:21,2014-04-14 16:04,admin,admin,
1948,142045,6971,40177,7842,0,N,N,N,CP_Phys,TT_Task,DT_FixedDrtn,TK_NotStart,CZA-TK-0705-2160,Welding,8379,1162,0,60,0,407.610404,407.610404,60,300,0,300,,,,2015-02-09 15:00,2015-02-16 15:00,,2014-09-27 13:00,2014-10-04 13:00,2014-09-27 13:00,2014-10-04 13:00,2014-09-27 13:00,2014-10-04 13:00,2015-02-09 15:00,2015-02-16 15:00,,PT_Normal,,,,,+luNXCdPG0WkBximq9Vodg,7TgZc2nVjUSPEk63gdMvGA,,,N,0,0,,,2014-04-13 07:21,2014-04-14 16:04,admin,admin,
1949,142046,6971,40177,7842,0,N,N,N,CP_Phys,TT_Task,DT_FixedDrtn,TK_NotStart,CZA-TK-0705-2170,Inspection,8379,1162,0,80,0,81.522081,81.522081,80,0,0,0,,,,2015-02-07 15:00,2015-02-16 15:00,,2014-09-24 13:00,2014-10-04 13:00,2014-09-24 13:00,2014-10-04 13:00,2014-09-24 13:00,2014-10-04 13:00,2015-02-07 15:00,2015-02-16 15:00,,PT_Normal,,,,,1nIoyi0g5UaF01HaCwwMnw,0nGcYD9FpUC/Jh3SDZpQuQ,,,N,0,0,,,2014-04-13 07:21,2014-04-14 16:04,admin,admin,
1950,142047,6971,40178,7842,0,N,N,N,CP_Phys,TT_Task,DT_FixedDrtn,TK_NotStart,CZA-TK-0705-2180,"Jacking, Erection and Fit-up",8379,1162,0,20,0,390.535776,390.535776,20,120,0,120,,,,2015-02-16 15:00,2015-02-18 15:00,,2014-10-04 13:00,2014-10-06 13:00,2014-10-04 13:00,2014-10-06 13:00,2014-10-04 13:00,2014-10-06 13:00,2015-02-16 15:00,2015-02-18 15:00,,PT_Normal,,,,,1ei9yMY5KkygWzAgOfs9Cw,VutqC/9ieUC81Yvia9lUig,,,N,0,0,,,2014-04-13 07:21,2014-04-14 16:04,admin,admin,
1951,142048,6971,40178,7842,0,N,N,N,CP_Phys,TT_Task,DT_FixedDrtn,TK_NotStart,CZA-TK-0705-2190,Welding,8379,1162,0,60,0,488.16972,488.16972,60,300,0,300,,,,2015-02-18 15:00,2015-02-25 15:00,,2014-10-06 13:00,2014-10-13 13:00,2014-10-06 13:00,2014-10-13 13:00,2014-10-06 13:00,2014-10-13 13:00,2015-02-18 15:00,2015-02-25 15:00,,PT_Normal,,,,,xc4VkGakaUiefXZ88j0HLQ,Aw94RTKH30uuIaDnn0cVfQ,,,N,0,0,,,2014-04-13 07:21,2014-04-14 16:04,admin,admin,
1952,142049,6971,40178,7842,0,N,N,N,CP_Phys,TT_Task,DT_FixedDrtn,TK_NotStart,CZA-TK-0705-2200,Inspection,8379,1162,0,80,0,97.633944,97.633944,80,0,0,0,,,,2015-02-16 15:00,2015-02-25 15:00,,2014-10-04 13:00,2014-10-13 13:00,2014-10-04 13:00,2014-10-13 13:00,2014-10-04 13:00,2014-10-13 13:00,2015-02-16 15:00,2015-02-25 15:00,,PT_Normal,,,,,Lp4g9HLaXEedGiZjC7gjHw,APPJZI0F702iDXmHRzaWyg,,,N,0,0,,,2014-04-13 07:21,2014-04-14 16:04,admin,admin,
1953,142050,6971,40179,7842,0,N,N,N,CP_Phys,TT_Task,DT_FixedDrtn,TK_NotStart,CZA-TK-0705-1810,"Cutting, Installation and Fit-up",8379,1162,0,20,0,36.397077,36.397077,20,120,0,120,,,,2014-09-28 15:00,2014-09-30 15:00,,2014-05-15 13:00,2014-05-18 13:00,2014-05-15 13:00,2014-05-18 13:00,2014-05-15 13:00,2014-05-18 13:00,2014-09-28 15:00,2014-09-30 15:00,,PT_Normal,,,,,RbMILChI00CGjK6yTYof7Q,TusGaWy6gUS+fsx5GV/z2w,,,N,0,0,,,2014-04-13 07:21,2014-04-14 16:04,admin,admin,
1954,142051,6971,40179,7842,0,N,N,N,CP_Phys,TT_Task,DT_FixedDrtn,TK_NotStart,CZA-TK-0705-1820,Welding,8379,1162,0,50,0,45.496346,45.496346,50,200,0,200,,,,2014-09-30 15:00,2014-10-06 15:00,,2014-05-18 13:00,2014-05-24 13:00,2014-05-18 13:00,2014-05-24 13:00,2014-05-18 13:00,2014-05-24 13:00,2014-09-30 15:00,2014-10-06 15:00,,PT_Normal,,,,,A02j4iAxBEq3WB0Pu3fXYA,50HzQdHa2U+rSALaPYXHUA,,,N,0,0,,,2014-04-13 07:21,2014-04-14 16:04,admin,admin,
1955,142052,6971,40179,7842,0,N,N,N,CP_Phys,TT_Task,DT_FixedDrtn,TK_NotStart,CZA-TK-0705-1830,Inspection,8379,1162,0,70,0,9.099269,9.099269,70,0,0,0,,,,2014-09-28 15:00,2014-10-06 15:00,,2014-05-15 13:00,2014-05-24 13:00,2014-05-15 13:00,2014-05-24 13:00,2014-05-15 13:00,2014-05-24 13:00,2014-09-28 15:00,2014-10-06 15:00,,PT_Normal,,,,,nhUeGQWvR0qV4p+o0NJurw,EcVzEYt1pUSRg87Biu2x9A,,,N,0,0,,,2014-04-13 07:21,2014-04-14 16:04,admin,admin,
1956,142053,6971,40171,7842,0,N,N,N,CP_Phys,TT_Task,DT_FixedDrtn,TK_NotStart,CZA-TK-0705-1720,Laying and Fit-up,8379,1162,0,40,0,690.416711,690.416711,40,280,0,280,,,,2014-08-21 15:00,2014-08-26 15:00,,2014-04-08 13:00,2014-04-13 13:00,2014-04-08 13:00,2014-04-13 13:00,2014-04-08 13:00,2014-04-13 13:00,2014-08-21 15:00,2014-08-26 15:00,,PT_Normal,,,,,+wApkE0WM0OCGf9WhXNaow,ZxUCLhAFpUeax4343OlnDw,,,N,0,0,,,2014-04-13 07:21,2014-04-14 16:04,admin,admin,
1957,142054,6971,40171,7842,0,N,N,N,CP_Phys,TT_Task,DT_FixedDrtn,TK_NotStart,CZA-TK-0705-1730,Welding,8379,1162,0,120,0,863.020889,863.020889,120,480,0,480,,,,2014-08-26 15:00,2014-09-09 15:00,,2014-04-13 13:00,2014-04-27 13:00,2014-04-13 13:00,2014-04-27 13:00,2014-04-13 13:00,2014-04-27 13:00,2014-08-26 15:00,2014-09-09 15:00,,PT_Normal,,,,,awdoP/H5G0uLmY59wS8iQw,QtucmntDvEiyKt5WqdaNrw,,,N,0,0,,,2014-04-13 07:21,2014-04-14 16:04,admin,admin,
1958,142055,6971,40171,7842,0,N,N,N,CP_Phys,TT_Task,DT_FixedDrtn,TK_NotStart,CZA-TK-0705-1740,Inspection,8379,1162,0,160,0,172.604178,172.604178,160,0,0,0,,,,2014-08-21 15:00,2014-09-09 15:00,,2014-04-08 13:00,2014-04-27 13:00,2014-04-08 13:00,2014-04-27 13:00,2014-04-08 13:00,2014-04-27 13:00,2014-08-21 15:00,2014-09-09 15:00,,PT_Normal,,,,,zYIaV0aZuU65jAQROHDFOA,3qoqrn7cD0COqLf+rSdE2g,,,N,0,0,,,2014-04-13 07:21,2014-04-14 16:04,admin,admin,
1959,142056,6971,40213,7842,0,N,N,N,CP_Phys,TT_Task,DT_FixedDrtn,TK_NotStart,CZA-TK-0705-2110,Inspection,8379,1162,0,80,0,65.214664,65.214664,80,0,0,0,,,,2015-01-19 15:00,2015-01-28 15:00,,2014-09-06 13:00,2014-09-15 13:00,2014-09-06 13:00,2014-09-15 13:00,2014-09-06 13:00,2014-09-15 13:00,2015-01-19 15:00,2015-01-28 15:00,,PT_Normal,,,,,C4iUmsbBvkC/PaqsALM/tQ,oFHmcWhrY0uquhF3sQeSQg,,,N,0,0,,,2014-04-13 07:21,2014-04-14 16:04,admin,admin,
1960,142057,6971,40213,7842,0,N,N,N,CP_Phys,TT_Task,DT_FixedDrtn,TK_NotStart,CZA-TK-0705-2090,"Jacking, Erection and Fit-up",8379,1162,0,20,0,260.858655,260.858655,20,120,0,120,,,,2015-01-19 15:00,2015-01-21 15:00,,2014-09-06 13:00,2014-09-08 13:00,2014-09-06 13:00,2014-09-08 13:00,2014-09-06 13:00,2014-09-08 13:00,2015-01-19 15:00,2015-01-21 15:00,,PT_Normal,,,,,zskoI+c21Em7nE0msn92bA,UkJ5ItzpEESPUJtOwfu68Q,,,N,0,0,,,2014-04-13 07:21,2014-04-14 16:04,admin,admin,
1961,142058,6971,40213,7842,0,N,N,N,CP_Phys,TT_Task,DT_FixedDrtn,TK_NotStart,CZA-TK-0705-2100,Welding,8379,1162,0,60,0,326.073318,326.073318,60,300,0,300,,,,2015-01-21 15:00,2015-01-28 15:00,,2014-09-08 13:00,2014-09-15 13:00,2014-09-08 13:00,2014-09-15 13:00,2014-09-08 13:00,2014-09-15 13:00,2015-01-21 15:00,2015-01-28 15:00,,PT_Normal,,,,,WZaCZBh8M0qg9fz11LgjIw,eKGv0XnockSTNv1f5yogOg,,,N,0,0,,,2014-04-13 07:21,2014-04-14 16:04,admin,admin,
1962,142059,6971,40282,7842,0,N,N,N,CP_Phys,TT_Task,DT_FixedDrtn,TK_NotStart,CZA-TK-0705-2120,"Jacking,Erection and Fit-up",8379,1162,0,20,0,260.858655,260.858655,20,120,0,120,,,,2015-01-28 15:00,2015-01-31 15:00,,2014-09-15 13:00,2014-09-17 13:00,2014-09-15 13:00,2014-09-17 13:00,2014-09-15 13:00,2014-09-17 13:00,2015-01-28 15:00,2015-01-31 15:00,,PT_Normal,,,,,J3uproppF0aDlV56J4Ngwg,KEAqZjtzEU208BoS4GQooQ,,,N,0,0,,,2014-04-13 07:21,2014-04-14 16:04,admin,admin,
1963,142060,6971,40282,7842,0,N,N,N,CP_Phys,TT_Task,DT_FixedDrtn,TK_NotStart,CZA-TK-0705-2130,Welding,8379,1162,0,60,0,326.073318,326.073318,60,300,0,300,,,,2015-01-31 15:00,2015-02-07 15:00,,2014-09-17 13:00,2014-09-24 13:00,2014-09-17 13:00,2014-09-24 13:00,2014-09-17 13:00,2014-09-24 13:00,2015-01-31 15:00,2015-02-07 15:00,,PT_Normal,,,,,Cvk2TMg7kkqvwbpgPmb1JA,4P9eZKoLsEyOwLOKMHyIQA,,,N,0,0,,,2014-04-13 07:21,2014-04-14 16:04,admin,admin,
1964,142061,6971,40282,7842,0,N,N,N,CP_Phys,TT_Task,DT_FixedDrtn,TK_NotStart,CZA-TK-0705-2140,Inspection,8379,1162,0,80,0,65.214664,65.214664,80,0,0,0,,,,2015-01-28 15:00,2015-02-07 15:00,,2014-09-15 13:00,2014-09-24 13:00,2014-09-15 13:00,2014-09-24 13:00,2014-09-15 13:00,2014-09-24 13:00,2015-01-28 15:00,2015-02-07 15:00,,PT_Normal,,,,,+a1P/iFoNk6sSBzzBMU7Eg,DOWElWxxZESMzwo4kykrfg,,,N,0,0,,,2014-04-13 07:21,2014-04-14 16:04,admin,admin,
1965,142062,6971,40283,7842,0,N,N,N,CP_Phys,TT_Task,DT_FixedDrtn,TK_NotStart,CZA-TK-0705-2000,Laying and Fit-up,8379,1162,0,20,0,0,0,20,120,0,120,,,,2014-12-16 15:00,2014-12-18 15:00,,2014-08-03 13:00,2014-08-05 13:00,2014-08-03 13:00,2014-08-05 13:00,2014-08-03 13:00,2014-08-05 13:00,2014-12-16 15:00,2014-12-18 15:00,,PT_Normal,,,,,RWKQlx2FsEuc7wELM4uNuQ,hbCYEUsPdUeA7GWLWFbmgw,,,N,0,0,,,2014-04-13 07:21,2014-04-14 16:04,admin,admin,
1966,142063,6971,40283,7842,0,N,N,N,CP_Phys,TT_Task,DT_FixedDrtn,TK_NotStart,CZA-TK-0705-2010,Welding,8379,1162,0,60,0,0,0,60,240,0,240,,,,2014-12-18 15:00,2014-12-25 15:00,,2014-08-05 13:00,2014-08-12 13:00,2014-08-05 13:00,2014-08-12 13:00,2014-08-05 13:00,2014-08-12 13:00,2014-12-18 15:00,2014-12-25 15:00,,PT_Normal,,,,,OtKp99q0TU6soWobpXgyuA,TGMFoqVrjUCedRPQfGikQg,,,N,0,0,,,2014-04-13 07:21,2014-04-14 16:04,admin,admin,
1967,142064,6971,40283,7842,0,N,N,N,CP_Phys,TT_Task,DT_FixedDrtn,TK_NotStart,CZA-TK-0705-2020,Inspection,8379,1162,0,80,0,0,0,80,0,0,0,,,,2014-12-16 15:00,2014-12-25 15:00,,2014-08-03 13:00,2014-08-12 13:00,2014-08-03 13:00,2014-08-12 13:00,2014-08-03 13:00,2014-08-12 13:00,2014-12-16 15:00,2014-12-25 15:00,,PT_Normal,,,,,/zH9OijRIU2XuLCHvYQJOQ,aK7lBiGEzEyJFnxf68a45Q,,,N,0,0,,,2014-04-13 07:21,2014-04-14 16:04,admin,admin,
1968,142065,6971,40284,7842,0,N,N,N,CP_Phys,TT_Task,DT_FixedDrtn,TK_NotStart,CZA-TK-0705-2030,"Cutting,lnstallation and Fit-up",8379,1162,0,20,0,0,0,20,120,0,120,,,,2014-12-25 15:00,2014-12-28 15:00,,2014-08-12 13:00,2014-08-14 13:00,2014-08-12 13:00,2014-08-14 13:00,2014-08-12 13:00,2014-08-14 13:00,2014-12-25 15:00,2014-12-28 15:00,,PT_Normal,,,,,4HpM6791xkqODFyeL6Us6w,NFv5Q1wFJ0+ITpaj98Dwhw,,,N,0,0,,,2014-04-13 07:21,2014-04-14 16:04,admin,admin,
1969,142066,6971,40284,7842,0,N,N,N,CP_Phys,TT_Task,DT_FixedDrtn,TK_NotStart,CZA-TK-0705-2040,Welding,8379,1162,0,50,0,0,0,50,200,0,200,,,,2014-12-28 15:00,2015-01-03 15:00,,2014-08-14 13:00,2014-08-20 13:00,2014-08-14 13:00,2014-08-20 13:00,2014-08-14 13:00,2014-08-20 13:00,2014-12-28 15:00,2015-01-03 15:00,,PT_Normal,,,,,TgZ2/ZztsEG1vSSae4WErA,dUGSISLWgE25NLdt5P3qZg,,,N,0,0,,,2014-04-13 07:21,2014-04-14 16:04,admin,admin,
1970,142067,6971,40284,7842,0,N,N,N,CP_Phys,TT_Task,DT_FixedDrtn,TK_NotStart,CZA-TK-0705-2050,Inspection,8379,1162,0,70,0,0,0,70,0,0,0,,,,2014-12-25 15:00,2015-01-03 15:00,,2014-08-12 13:00,2014-08-20 13:00,2014-08-12 13:00,2014-08-20 13:00,2014-08-12 13:00,2014-08-20 13:00,2014-12-25 15:00,2015-01-03 15:00,,PT_Normal,,,,,fCOyxzTzkkekZQmFB+GzSg,IxQjD8WKFU+GPuNpU34ywg,,,N,0,0,,,2014-04-13 07:21,2014-04-14 16:04,admin,admin,
1971,142068,6971,40385,7842,0,N,N,N,CP_Phys,TT_Task,DT_FixedDrtn,TK_NotStart,CZA-TK-0705-2210,"Jacking, Erection and Fit-up",8379,1162,0,20,0,489.177072,489.177072,20,120,0,120,,,,2015-02-25 15:00,2015-02-28 15:00,,2014-10-13 13:00,2014-10-15 13:00,2014-10-13 13:00,2014-10-15 13:00,2014-10-13 13:00,2014-10-15 13:00,2015-02-25 15:00,2015-02-28 15:00,,PT_Normal,,,,,JMintsZno06FJ2mWWH+Byg,2l5KyIPQsECVxZRytmrnMw,,,N,0,0,,,2014-04-13 07:21,2014-04-14 16:04,admin,admin,
1972,142069,6971,40385,7842,0,N,N,N,CP_Phys,TT_Task,DT_FixedDrtn,TK_NotStart,CZA-TK-0705-2220,Welding,8379,1162,0,60,0,611.47134,611.47134,60,300,0,300,,,,2015-02-28 15:00,2015-03-07 15:00,,2014-10-15 13:00,2014-10-22 13:00,2014-10-15 13:00,2014-10-22 13:00,2014-10-15 13:00,2014-10-22 13:00,2015-02-28 15:00,2015-03-07 15:00,,PT_Normal,,,,,VMQSKJ9c+ES3wJUGnoDVDw,iRHoGC8M5U6ecmpqlek3cA,,,N,0,0,,,2014-04-13 07:21,2014-04-14 16:04,admin,admin,
1973,142070,6971,40385,7842,0,N,N,N,CP_Phys,TT_Task,DT_FixedDrtn,TK_NotStart,CZA-TK-0705-2230,Inspection,8379,1162,0,80,0,122.294268,122.294268,80,0,0,0,,,,2015-02-25 15:00,2015-03-07 15:00,,2014-10-13 13:00,2014-10-22 13:00,2014-10-13 13:00,2014-10-22 13:00,2014-10-13 13:00,2014-10-22 13:00,2015-02-25 15:00,2015-03-07 15:00,,PT_Normal,,,,,Ow0D9wQsD0qhMeFt+oduzA,a/kDVrlzik6+xMKahUEY6w,,,N,0,0,,,2014-04-13 07:21,2014-04-14 16:04,admin,admin,
1974,142071,6971,40386,7842,0,N,N,N,CP_Phys,TT_Task,DT_FixedDrtn,TK_NotStart,CZA-TK-0705-1750,Erection and Fit-up,8379,1162,0,20,0,97.821913,97.821913,20,120,0,120,,,,2014-09-09 15:00,2014-09-11 15:00,,2014-04-27 13:00,2014-04-29 13:00,2014-04-27 13:00,2014-04-29 13:00,2014-04-27 13:00,2014-04-29 13:00,2014-09-09 15:00,2014-09-11 15:00,,PT_Normal,,,,,8zfOx5B8zE6fv95Sv5HtHw,ep6edDvv2kin9GRG73FSVw,,,N,0,0,,,2014-04-13 07:21,2014-04-14 16:04,admin,admin,
1975,142072,6971,40386,7842,0,N,N,N,CP_Phys,TT_Task,DT_FixedDrtn,TK_NotStart,CZA-TK-0705-1760,Welding,8379,1162,0,60,0,122.277392,122.277392,60,300,0,300,,,,2014-09-11 15:00,2014-09-18 15:00,,2014-04-29 13:00,2014-05-06 13:00,2014-04-29 13:00,2014-05-06 13:00,2014-04-29 13:00,2014-05-06 13:00,2014-09-11 15:00,2014-09-18 15:00,,PT_Normal,,,,,wSCyfUPuaUGLZfnfbJd1MQ,U56gYb400k2Ap5aG3TA0Mg,,,N,0,0,,,2014-04-13 07:21,2014-04-14 16:04,admin,admin,
1976,142073,6971,40386,7842,0,N,N,N,CP_Phys,TT_Task,DT_FixedDrtn,TK_NotStart,CZA-TK-0705-1770,Inspection,8379,1162,0,80,0,24.455478,24.455478,80,0,0,0,,,,2014-09-09 15:00,2014-09-18 15:00,,2014-04-27 13:00,2014-05-06 13:00,2014-04-27 13:00,2014-05-06 13:00,2014-04-27 13:00,2014-05-06 13:00,2014-09-09 15:00,2014-09-18 15:00,,PT_Normal,,,,,oW1JgTw+x0ydp5xLAK6n/g,1NiIxwLIqkCMF1FsSlsN7Q,,,N,0,0,,,2014-04-13 07:21,2014-04-14 16:04,admin,admin,
1977,142074,6971,40387,7842,0,N,N,N,CP_Phys,TT_Task,DT_FixedDrtn,TK_NotStart,CZA-TK-0705-1780,Erection and Fit-up,8379,1162,0,20,0,260.858655,260.858655,20,120,0,120,,,,2014-09-18 15:00,2014-09-21 15:00,,2014-05-06 13:00,2014-05-08 13:00,2014-05-06 13:00,2014-05-08 13:00,2014-05-06 13:00,2014-05-08 13:00,2014-09-18 15:00,2014-09-21 15:00,,PT_Normal,,,,,9yJ/ars9ZkC9HSMCeTDeBg,mTnhy87JgkqRfhfvVZCrMw,,,N,0,0,,,2014-04-13 07:21,2014-04-14 16:04,admin,admin,
1978,142075,6971,40387,7842,0,N,N,N,CP_Phys,TT_Task,DT_FixedDrtn,TK_NotStart,CZA-TK-0705-1790,Welding,8379,1162,0,60,0,326.073318,326.073318,60,300,0,300,,,,2014-09-21 15:00,2014-09-28 15:00,,2014-05-08 13:00,2014-05-15 13:00,2014-05-08 13:00,2014-05-15 13:00,2014-05-08 13:00,2014-05-15 13:00,2014-09-21 15:00,2014-09-28 15:00,,PT_Normal,,,,,DK2e2p/mHU2UraVble51PA,gNkaKgKMjk+I1lg4zk/3tQ,,,N,0,0,,,2014-04-13 07:21,2014-04-14 16:04,admin,admin,
1979,142076,6971,40387,7842,0,N,N,N,CP_Phys,TT_Task,DT_FixedDrtn,TK_NotStart,CZA-TK-0705-1800,Inspection,8379,1162,0,80,0,65.214664,65.214664,80,0,0,0,,,,2014-09-18 15:00,2014-09-28 15:00,,2014-05-06 13:00,2014-05-15 13:00,2014-05-06 13:00,2014-05-15 13:00,2014-05-06 13:00,2014-05-15 13:00,2014-09-18 15:00,2014-09-28 15:00,,PT_Normal,,,,,mDIOp5NQ7EanAEGDy/85sQ,NgWrfY8iGUaZEW8l6EbbsA,,,N,0,0,,,2014-04-13 07:21,2014-04-14 16:04,admin,admin,
1980,142077,6971,40388,7842,0,N,N,N,CP_Phys,TT_Task,DT_FixedDrtn,TK_NotStart,CZA-TK-0705-1960,Laying and Fit-up,8379,1162,0,40,0,905.391359,905.391359,40,240,0,240,,,,2014-12-02 15:00,2014-12-07 15:00,,2014-07-20 13:00,2014-07-24 13:00,2014-07-20 13:00,2014-07-24 13:00,2014-07-20 13:00,2014-07-24 13:00,2014-12-02 15:00,2014-12-07 15:00,,PT_Normal,,,,,ZpquIuEKs0+gQPjRSDty8A,WF0GKzglekKoLLq7IMqnbg,,,N,0,0,,,2014-04-13 07:21,2014-04-14 16:04,admin,admin,
1981,142078,6971,40388,7842,0,N,N,N,CP_Phys,TT_Task,DT_FixedDrtn,TK_NotStart,CZA-TK-0705-1970,Welding,8379,1162,0,80,0,1131.739199,1131.739199,80,320,0,320,,,,2014-12-07 15:00,2014-12-16 15:00,,2014-07-24 13:00,2014-08-03 13:00,2014-07-24 13:00,2014-08-03 13:00,2014-07-24 13:00,2014-08-03 13:00,2014-12-07 15:00,2014-12-16 15:00,,PT_Normal,,,,,EmPSzcCxC0ydpr+eDQxCHQ,aQ0Zo3R4/EChkLqkqsOAog,,,N,0,0,,,2014-04-13 07:21,2014-04-14 16:04,admin,admin,
1982,142079,6971,40388,7842,0,N,N,N,CP_Phys,TT_Task,DT_FixedDrtn,TK_NotStart,CZA-TK-0705-1980,Inspection,8379,1162,0,120,0,226.34784,226.34784,120,0,0,0,,,,2014-12-02 15:00,2014-12-16 15:00,,2014-07-20 13:00,2014-08-03 13:00,2014-07-20 13:00,2014-08-03 13:00,2014-07-20 13:00,2014-08-03 13:00,2014-12-02 15:00,2014-12-16 15:00,,PT_Normal,,,,,owBrJR5/uUi+wws7/mLRNg,8VRZ+x0/qEuq6xhlUxSvdQ,,,N,0,0,,,2014-04-13 07:21,2014-04-14 16:04,admin,admin,
1983,142080,6971,40389,7842,0,N,N,N,CP_Phys,TT_Task,DT_FixedDrtn,TK_NotStart,CZA-TK-0705-2390,Installation of Primary and Secondary Seal,8379,1162,0,60,0,0,0,60,0,0,0,,,,2015-04-14 15:00,2015-04-21 15:00,,2014-11-30 13:00,2014-12-07 13:00,2014-11-30 13:00,2014-12-07 13:00,2014-11-30 13:00,2014-12-07 13:00,2015-04-14 15:00,2015-04-21 15:00,,PT_Normal,,,,,8zi4f7ZX00m4KT4uHGvYdA,ZYZj09gM6EGUpqVS7Sqgrg,,,N,0,0,,,2014-04-13 07:21,2014-04-14 16:04,admin,admin,
1984,142081,6971,40389,7842,0,N,N,N,CP_Phys,TT_Task,DT_FixedDrtn,TK_NotStart,CZA-TK-0705-2400,Inspection,8379,1162,330,10,0,0,0,10,0,0,0,,,,2015-04-21 15:00,2015-04-22 15:00,,2014-12-07 13:00,2014-12-08 13:00,2014-12-07 13:00,2014-12-08 13:00,2014-12-07 13:00,2014-12-08 13:00,2015-04-21 15:00,2015-04-22 15:00,,PT_Normal,,,,,8tQ6WNDA006C+4Wkgc7o6w,PB5Eoyqw2kqTOgMiOv1iZQ,,,N,0,0,,,2014-04-13 07:21,2014-04-14 16:04,admin,admin,
1985,142082,6971,40390,7842,0,N,N,N,CP_Phys,TT_Task,DT_FixedDrtn,TK_NotStart,CZA-TK-0705-2330,"Lay-out, Cutting, and Fit-up",8379,1162,0,20,0,0,0,20,120,0,120,,,,2015-03-25 15:00,2015-03-28 15:00,,2014-11-10 13:00,2014-11-12 13:00,2014-11-10 13:00,2014-11-12 13:00,2014-11-10 13:00,2014-11-12 13:00,2015-03-25 15:00,2015-03-28 15:00,,PT_Normal,,,,,y5ZSDw7FoE2mo+LptwB3kA,uKb+GWnIZkirRDrEsn+5Hw,,,N,0,0,,,2014-04-13 07:21,2014-04-14 16:04,admin,admin,
1986,142083,6971,40390,7842,0,N,N,N,CP_Phys,TT_Task,DT_FixedDrtn,TK_NotStart,CZA-TK-0705-2340,Welding,8379,1162,0,50,0,0,0,50,200,0,200,,,,2015-03-28 15:00,2015-04-02 15:00,,2014-11-12 13:00,2014-11-18 13:00,2014-11-12 13:00,2014-11-18 13:00,2014-11-12 13:00,2014-11-18 13:00,2015-03-28 15:00,2015-04-02 15:00,,PT_Normal,,,,,qrlYhArm4kifYB1LfVugpQ,yXthoRpiGkycE7489B1y2A,,,N,0,0,,,2014-04-13 07:21,2014-04-14 16:04,admin,admin,
1987,142084,6971,40390,7842,0,N,N,N,CP_Phys,TT_Task,DT_FixedDrtn,TK_NotStart,CZA-TK-0705-2350,Inspection,8379,1162,0,70,0,0,0,70,0,0,0,,,,2015-03-25 15:00,2015-04-02 15:00,,2014-11-10 13:00,2014-11-18 13:00,2014-11-10 13:00,2014-11-18 13:00,2014-11-10 13:00,2014-11-18 13:00,2015-03-25 15:00,2015-04-02 15:00,,PT_Normal,,,,,z3TGKtVIykSC5yL/OfLh9A,dQsh56/hgEynth8JZI0xVg,,,N,0,0,,,2014-04-13 07:21,2014-04-14 16:04,admin,admin,
1988,142085,6971,39973,7842,0,N,N,N,CP_Phys,TT_Mile,DT_FixedDrtn,TK_NotStart,CZA-TK-0705-1680,Foundation Takeover From Client,,0,0,0,0,0,0,0,0,0,0,2014-03-31 07:00,,,2014-03-31 07:00,2014-03-31 07:00,,2014-03-31 07:00,2014-03-31 07:00,2014-03-31 07:00,2014-03-31 07:00,2014-03-31 07:00,2014-03-31 07:00,2014-03-31 07:00,2014-03-31 07:00,CS_MSO,PT_Normal,,,,,fR8R9ZoOqUmNZ8SMnvY1zg,nXiK6wcLpESg3GWn+navLA,,,N,0,0,,,2014-04-13 07:21,2014-04-13 07:21,admin,admin,
1989,142086,6971,39974,7842,0,N,N,N,CP_Phys,TT_Task,DT_FixedDrtn,TK_NotStart,CZA-TK-0705-2430,Tank Calibration,8379,832,0,50,0,2156.806912,2156.806912,50,0,0,0,,,,2015-06-20 15:00,2015-06-25 15:00,,2015-03-15 13:00,2015-03-21 13:00,2015-03-15 13:00,2015-03-21 13:00,2015-03-15 13:00,2015-03-21 13:00,2015-06-20 15:00,2015-06-25 15:00,,PT_Normal,,,,,nE1NOFcXc0W8E4MiNrSeTw,Y0BPVLGzfU+7UiEVw4pggQ,,,N,0,0,,,2014-04-13 07:21,2014-04-14 16:04,admin,admin,
1990,142087,6971,39974,7842,0,N,N,N,CP_Phys,TT_Task,DT_FixedDrtn,TK_NotStart,CZA-TK-0705-2440,Tank Handover,8379,832,0,20,0,2156.806912,2156.806912,20,0,0,0,,,,2015-06-25 15:00,2015-06-28 15:00,,2015-03-21 13:00,2015-03-23 13:00,2015-03-21 13:00,2015-03-23 13:00,2015-03-21 13:00,2015-03-23 13:00,2015-06-25 15:00,2015-06-28 15:00,,PT_Normal,,,,,JQLj6Ri2XEOX+kzSMDpMOw,ugYtx42j7kGZe9lsVUpjTQ,,,N,0,0,,,2014-04-13 07:21,2014-04-14 16:04,admin,admin,
1991,142088,6971,40034,7842,0,N,N,N,CP_Phys,TT_Task,DT_FixedDrtn,TK_NotStart,CZA-TK-0705-2410,"Filling, Holding and Transfering/Draining of Water",8379,832,0,200,0,10784.034558,10784.034558,200,0,0,0,,,,2015-04-22 15:00,2015-05-16 15:00,,2015-01-15 13:00,2015-02-08 13:00,2015-01-15 13:00,2015-02-08 13:00,2015-01-15 13:00,2015-02-08 13:00,2015-04-22 15:00,2015-05-16 15:00,,PT_Normal,,,,,yjAW8OXdDUCejXLPfQcMOg,olpmNdjYfE+bjWhrjxL3gQ,,,N,0,0,,,2014-04-13 07:21,2014-04-14 16:04,admin,admin,
1992,142089,6971,40017,7842,0,N,N,N,CP_Phys,TT_Task,DT_FixedDrtn,TK_NotStart,CZA-TK-0705-2420,"Blasting and Painting (Shell, Roof & Bottom)-Outside & Inside",8379,832,0,300,0,6470.420735,6470.420735,300,900,0,900,,,,2015-05-16 15:00,2015-06-20 15:00,,2015-02-08 13:00,2015-03-15 13:00,2015-02-08 13:00,2015-03-15 13:00,2015-02-08 13:00,2015-03-15 13:00,2015-05-16 15:00,2015-06-20 15:00,,PT_Normal,,,,,k0iTTVnybE6pxtDsijUOwQ,Pr71bBADzEupd7iGfAtO5g,,,N,0,0,,,2014-04-13 07:21,2014-04-14 16:04,admin,admin,
1993,142090,6971,39978,7842,0,N,N,N,CP_Phys,TT_Task,DT_FixedDrtn,TK_NotStart,CZA-TK-0700-1930,"Filling, Holding and Transfering/Draining of Water",8378,832,0,350,0,11747.686298,11747.686298,350,0,0,0,,,,2015-03-29 15:00,2015-05-09 15:00,,2014-12-22 13:00,2015-02-01 13:00,2014-12-22 13:00,2015-02-01 13:00,2014-12-22 13:00,2015-02-01 13:00,2015-03-29 15:00,2015-05-09 15:00,,PT_Normal,,,,,VLX6ZOKS5UK1tT3OokMDCg,,,,N,0,0,,,2014-04-13 07:21,2014-04-14 16:04,admin,admin,
1994,142091,6971,39979,7842,0,N,N,N,CP_Phys,TT_Task,DT_FixedDrtn,TK_NotStart,CZA-TK-0700-1000,Cutting of Annular Plates,8483,3228,0,40,0,245.808,245.808,40,0,0,0,,,,2015-01-11 09:00,2015-01-15 09:00,,2013-12-30 11:00,2014-01-04 11:00,2013-12-30 11:00,2014-01-04 11:00,2013-12-30 11:00,2014-01-04 11:00,2015-01-11 09:00,2015-01-15 09:00,,PT_Normal,,,,,61/PUgAxkkCB8H2xOI2d4g,,,,N,0,0,,,2014-04-13 07:21,2014-04-14 17:03,admin,admin,
1995,142092,6971,39979,7842,0,N,N,N,CP_Phys,TT_Task,DT_FixedDrtn,TK_NotStart,CZA-TK-0700-1010,Cutting of Bottom Plates & Compression Ring,8483,3272,0,40,0,1924.2822,1924.2822,40,0,0,0,,,,2015-01-15 13:00,2015-01-20 13:00,,2013-12-30 11:00,2014-01-04 11:00,2013-12-30 11:00,2014-01-04 11:00,2013-12-30 11:00,2014-01-04 11:00,2015-01-15 13:00,2015-01-20 13:00,,PT_Normal,,,,,YDPKisn9qkKtizsdO/JbMA,,,,N,0,0,,,2014-04-13 07:21,2014-04-14 17:03,admin,admin,
1996,142093,6971,39979,7842,0,N,N,N,CP_Phys,TT_Task,DT_FixedDrtn,TK_NotStart,CZA-TK-0700-1020,"Cutting, Bevelling & Rolling  Shell No.9",8483,3272,0,20,0,595.8735,595.8735,20,0,0,0,,,,2015-01-18 09:00,2015-01-20 09:00,,2014-01-01 07:00,2014-01-02 17:00,2014-01-01 07:00,2014-01-02 17:00,2014-01-01 07:00,2014-01-02 17:00,2015-01-18 09:00,2015-01-20 09:00,,PT_Normal,,,,,dKWqWfxt9EK7E/Bgz0lA2w,,,,N,0,0,,,2014-04-13 07:21,2014-04-14 17:03,admin,admin,
1997,142094,6971,39979,7842,0,N,N,N,CP_Phys,TT_Task,DT_FixedDrtn,TK_NotStart,CZA-TK-0700-1030,"Cutting, Bevelling and Rolling Shell No.10",8483,3272,0,20,0,384.8364,384.8364,20,0,0,0,,,,2015-01-18 09:00,2015-01-20 09:00,,2014-01-01 07:00,2014-01-02 17:00,2014-01-01 07:00,2014-01-02 17:00,2014-01-01 07:00,2014-01-02 17:00,2015-01-18 09:00,2015-01-20 09:00,,PT_Normal,,,,,MOSv7XUh+UmBXIG3G9lG/g,,,,N,0,0,,,2014-04-13 07:21,2014-04-14 17:03,admin,admin,
1998,142095,6971,39979,7842,0,N,N,N,CP_Phys,TT_Task,DT_FixedDrtn,TK_NotStart,CZA-TK-0700-1040,Cutting of Floating Deck Plate,8483,3272,0,70,0,1186.974,1186.974,70,0,0,0,,,,2015-01-20 09:00,2015-01-28 09:00,,2014-01-04 07:00,2014-01-11 17:00,2014-01-04 07:00,2014-01-11 17:00,2014-01-04 07:00,2014-01-11 17:00,2015-01-20 09:00,2015-01-28 09:00,,PT_Normal,,,,,mrtNy/n9FEOPkpR9DdrK3Q,,,,N,0,0,,,2014-04-13 07:21,2014-04-14 17:03,admin,admin,
1999,142096,6971,39979,7842,0,N,N,N,CP_Phys,TT_Task,DT_FixedDrtn,TK_NotStart,CZA-TK-0700-1050,Cutting of Pontoon,8483,3272,0,100,0,995.472,995.472,100,0,0,0,,,,2015-01-21 15:00,2015-02-02 15:00,,2014-01-05 13:00,2014-01-16 13:00,2014-01-05 13:00,2014-01-16 13:00,2014-01-05 13:00,2014-01-16 13:00,2015-01-21 15:00,2015-02-02 15:00,,PT_Normal,,,,,QGbbHp313Uq4kkEsjUcXwA,,,,N,0,0,,,2014-04-13 07:21,2014-04-14 17:03,admin,admin,
2000,142097,6971,39979,7842,0,N,N,N,CP_Phys,TT_Task,DT_FixedDrtn,TK_NotStart,CZA-TK-0700-1060,"Cutting, Fit-up, Roof legs and Manholes",8483,3272,0,70,0,202.1391,202.1391,70,0,0,0,,,,2015-01-24 11:00,2015-02-01 11:00,,2014-01-07 09:00,2014-01-15 09:00,2014-01-07 09:00,2014-01-15 09:00,2014-01-07 09:00,2014-01-15 09:00,2015-01-24 11:00,2015-02-01 11:00,,PT_Normal,,,,,sZexs5EXUkC6pqekm0Fi1Q,,,,N,0,0,,,2014-04-13 07:21,2014-04-14 17:03,admin,admin,
2001,142098,6971,39979,7842,0,N,N,N,CP_Phys,TT_Task,DT_FixedDrtn,TK_NotStart,CZA-TK-0700-1070,"Cutting, Fit-up, and Welding of Roof Structure",8483,3272,0,70,0,2403.444,2403.444,70,0,0,0,,,,2015-02-01 11:00,2015-02-09 11:00,,2014-01-15 09:00,2014-01-23 09:00,2014-01-15 09:00,2014-01-23 09:00,2014-01-15 09:00,2014-01-23 09:00,2015-02-01 11:00,2015-02-09 11:00,,PT_Normal,,,,,2LS1uinaXk66boTzKbC2FA,,,,N,0,0,,,2014-04-13 07:21,2014-04-14 17:03,admin,admin,
2002,142099,6971,39979,7842,0,N,N,N,CP_Phys,TT_Task,DT_FixedDrtn,TK_NotStart,CZA-TK-0700-1080,Cutting of Roof Plates,8483,3272,0,20,0,2068.293,2068.293,20,0,0,0,,,,2015-02-09 11:00,2015-02-11 11:00,,2014-01-23 09:00,2014-01-26 09:00,2014-01-23 09:00,2014-01-26 09:00,2014-01-23 09:00,2014-01-26 09:00,2015-02-09 11:00,2015-02-11 11:00,,PT_Normal,,,,,nJpCvz+jq0OHZV1aeKf7yw,,,,N,0,0,,,2014-04-13 07:21,2014-04-14 17:03,admin,admin,
2003,142100,6971,39979,7842,0,N,N,N,CP_Phys,TT_Task,DT_FixedDrtn,TK_NotStart,CZA-TK-0700-1090,"Cutting, Fit-up, & Welding of Roof Nozzles, Manholes & other Appurtanances",8483,3272,0,70,0,0,0,70,0,0,0,,,,2015-02-11 07:00,2015-02-18 17:00,,2014-01-25 15:00,2014-02-02 15:00,2014-01-25 15:00,2014-02-02 15:00,2014-01-25 15:00,2014-02-02 15:00,2015-02-11 07:00,2015-02-18 17:00,,PT_Normal,,,,,xHV8mTeyvkCeZoKMD/r8fQ,,,,N,0,0,,,2014-04-13 07:21,2014-04-14 17:03,admin,admin,
2004,142101,6971,39979,7842,0,N,N,N,CP_Phys,TT_Task,DT_FixedDrtn,TK_NotStart,CZA-TK-0700-1100,"Cutting, Fit-up & Welding of Roof Platform, Gratings and Handrails",8483,3272,0,150,0,0,0,150,0,0,0,,,,2015-02-14 11:00,2015-03-03 11:00,,2014-01-28 09:00,2014-02-15 09:00,2014-01-28 09:00,2014-02-15 09:00,2014-01-28 09:00,2014-02-15 09:00,2015-02-14 11:00,2015-03-03 11:00,,PT_Normal,,,,,TKvI7BEhy0mDR39/NID9ew,,,,N,0,0,,,2014-04-13 07:21,2014-04-14 17:03,admin,admin,
2005,142102,6971,39979,7842,0,N,N,N,CP_Phys,TT_Task,DT_FixedDrtn,TK_NotStart,CZA-TK-0700-1110,"Cutting, Bevelling and Rolling Shell No.8",8483,3272,0,20,0,595.8735,595.8735,20,0,0,0,,,,2015-02-21 07:00,2015-02-22 17:00,,2014-02-03 15:00,2014-02-05 15:00,2014-02-03 15:00,2014-02-05 15:00,2014-02-03 15:00,2014-02-05 15:00,2015-02-21 07:00,2015-02-22 17:00,,PT_Normal,,,,,n5URbyZll0a6jdba/l00GA,,,,N,0,0,,,2014-04-13 07:21,2014-04-14 17:03,admin,admin,
2006,142103,6971,39979,7842,0,N,N,N,CP_Phys,TT_Task,DT_FixedDrtn,TK_NotStart,CZA-TK-0700-1120,"Cutting, Bevelling and Rolling Shell No.7",8483,3272,0,20,0,595.8735,595.8735,20,0,0,0,,,,2015-02-21 07:00,2015-02-22 17:00,,2014-02-03 15:00,2014-02-05 15:00,2014-02-03 15:00,2014-02-05 15:00,2014-02-03 15:00,2014-02-05 15:00,2015-02-21 07:00,2015-02-22 17:00,,PT_Normal,,,,,nLB3aaLsmU62AuCr/5rnHg,,,,N,0,0,,,2014-04-13 07:21,2014-04-14 17:03,admin,admin,
2007,142104,6971,39979,7842,0,N,N,N,CP_Phys,TT_Task,DT_FixedDrtn,TK_NotStart,CZA-TK-0700-1130,"Cutting, Bevelling and Rolling Shell No.6",8483,3272,0,20,0,670.3689,670.3689,20,0,0,0,,,,2015-02-23 07:00,2015-02-24 17:00,,2014-02-05 15:00,2014-02-08 15:00,2014-02-05 15:00,2014-02-08 15:00,2014-02-05 15:00,2014-02-08 15:00,2015-02-23 07:00,2015-02-24 17:00,,PT_Normal,,,,,Dhlo1U7yrkSRNHdRmjCwtw,,,,N,0,0,,,2014-04-13 07:21,2014-04-14 17:03,admin,admin,
2008,142105,6971,39979,7842,0,N,N,N,CP_Phys,TT_Task,DT_FixedDrtn,TK_NotStart,CZA-TK-0700-1140,"Cutting, Bevelling and Rolling Shell No.5",8483,3272,0,20,0,893.8929,893.8929,20,0,0,0,,,,2015-02-23 07:00,2015-02-24 17:00,,2014-02-05 15:00,2014-02-08 15:00,2014-02-05 15:00,2014-02-08 15:00,2014-02-05 15:00,2014-02-08 15:00,2015-02-23 07:00,2015-02-24 17:00,,PT_Normal,,,,,UlPCV1Hl+02frZ1UXub95A,,,,N,0,0,,,2014-04-13 07:21,2014-04-14 17:03,admin,admin,
2009,142106,6971,39979,7842,0,N,N,N,CP_Phys,TT_Task,DT_FixedDrtn,TK_NotStart,CZA-TK-0700-1150,"Cutting, Bevelling and Rolling Shell No.4",8483,3272,0,20,0,1042.9227,1042.9227,20,0,0,0,,,,2015-02-25 07:00,2015-02-26 17:00,,2014-02-08 15:00,2014-02-10 15:00,2014-02-08 15:00,2014-02-10 15:00,2014-02-08 15:00,2014-02-10 15:00,2015-02-25 07:00,2015-02-26 17:00,,PT_Normal,,,,,kDXgT0vLg0qvkG444Uq1tQ,,,,N,0,0,,,2014-04-13 07:21,2014-04-14 17:03,admin,admin,
2010,142107,6971,39979,7842,0,N,N,N,CP_Phys,TT_Task,DT_FixedDrtn,TK_NotStart,CZA-TK-0700-1160,"Cutting, Bevelling and Rolling Shell No.3",8483,3272,0,20,0,1266.4926,1266.4926,20,0,0,0,,,,2015-02-25 07:00,2015-02-26 17:00,,2014-02-08 15:00,2014-02-10 15:00,2014-02-08 15:00,2014-02-10 15:00,2014-02-08 15:00,2014-02-10 15:00,2015-02-25 07:00,2015-02-26 17:00,,PT_Normal,,,,,1+mxEz6sd0SmsKY/9UM9Jw,,,,N,0,0,,,2014-04-13 07:21,2014-04-14 17:03,admin,admin,
2011,142108,6971,39979,7842,0,N,N,N,CP_Phys,TT_Task,DT_FixedDrtn,TK_NotStart,CZA-TK-0700-1170,"Cutting, Bevelling and Rolling Shell No.2",8483,3272,0,20,0,1415.5668,1415.5668,20,0,0,0,,,,2015-02-28 07:00,2015-03-01 17:00,,2014-02-10 15:00,2014-02-12 15:00,2014-02-10 15:00,2014-02-12 15:00,2014-02-10 15:00,2014-02-12 15:00,2015-02-28 07:00,2015-03-01 17:00,,PT_Normal,,,,,odvmxRNyJUOhsTSmio6J8Q,,,,N,0,0,,,2014-04-13 07:21,2014-04-14 17:03,admin,admin,
2012,142109,6971,39979,7842,0,N,N,N,CP_Phys,TT_Task,DT_FixedDrtn,TK_NotStart,CZA-TK-0700-1180,"Cutting, Bevelling and Rolling Shell No.1",8483,3272,0,20,0,1587.1626,1587.1626,20,0,0,0,,,,2015-02-28 07:00,2015-03-01 17:00,,2014-02-10 15:00,2014-02-12 15:00,2014-02-10 15:00,2014-02-12 15:00,2014-02-10 15:00,2014-02-12 15:00,2015-02-28 07:00,2015-03-01 17:00,,PT_Normal,,,,,KMf2/a5iwk6emyNYaoKzgw,,,,N,0,0,,,2014-04-13 07:21,2014-04-14 17:03,admin,admin,
2013,142110,6971,39979,7842,0,N,N,N,CP_Phys,TT_Task,DT_FixedDrtn,TK_NotStart,CZA-TK-0700-1190,"Cutting, Fit-up & Welding of Shell Nozzles, Manholes and Other Appurtanances",8483,3272,0,80,0,80.2916,80.2916,80,0,0,0,,,,2015-03-02 07:00,2015-03-10 17:00,,2014-02-12 15:00,2014-02-22 15:00,2014-02-12 15:00,2014-02-22 15:00,2014-02-12 15:00,2014-02-22 15:00,2015-03-02 07:00,2015-03-10 17:00,,PT_Normal,,,,,kGgEy/6vZ0iBa6ELtb3B4A,,,,N,0,0,,,2014-04-13 07:21,2014-04-14 17:03,admin,admin,
2014,142111,6971,39979,7842,0,N,N,N,CP_Phys,TT_Task,DT_FixedDrtn,TK_NotStart,CZA-TK-0700-1200,"Cutting, Fit-up & Welding of Stairway Platform, Gratings and  Handrails",8483,3272,2440,60,0,0,0,60,0,0,0,,,,2015-03-02 15:00,2015-03-09 15:00,,2014-02-13 13:00,2014-02-20 13:00,2014-02-13 13:00,2014-02-20 13:00,2014-02-13 13:00,2014-02-20 13:00,2015-03-02 15:00,2015-03-09 15:00,,PT_Normal,,,,,u5Yz85YUtEGdslu9v+c83A,,,,N,0,0,,,2014-04-13 07:21,2014-04-14 17:03,admin,admin,
2015,142112,6971,39980,7842,0,N,N,N,CP_Phys,TT_Mile,DT_FixedDrtn,TK_NotStart,CZA-TK-0700-1210,Foundation Takeover From Client,,0,0,0,0,0,0,0,0,0,0,2014-04-10 07:00,,,2014-04-10 07:00,2014-04-10 07:00,,2014-04-10 07:00,2014-04-10 07:00,2014-04-10 07:00,2014-04-10 07:00,2014-04-10 07:00,2014-04-10 07:00,2014-04-10 07:00,2014-04-10 07:00,CS_MSO,PT_Normal,,,,,0YwfpvcZ/0CsoYlhldB7fA,,,,N,0,0,,,2014-04-13 07:21,2014-04-13 07:21,admin,admin,
2016,142113,6971,40173,7842,0,N,N,N,CP_Phys,TT_Task,DT_FixedDrtn,TK_NotStart,CZA-TK-0700-1720,Inspection,8378,832,0,80,0,97.830943,97.830943,80,0,0,0,,,,2015-01-13 15:00,2015-01-22 15:00,,2014-10-08 13:00,2014-10-18 13:00,2014-10-08 13:00,2014-10-18 13:00,2014-10-08 13:00,2014-10-18 13:00,2015-01-13 15:00,2015-01-22 15:00,,PT_Normal,,,,,/LOrbg/4a02iitB8jq2SJw,,,,N,0,0,,,2014-04-13 07:21,2014-04-14 16:04,admin,admin,
2017,142114,6971,40173,7842,0,N,N,N,CP_Phys,TT_Task,DT_FixedDrtn,TK_NotStart,CZA-TK-0700-1700,"Jacking, Erection and Fit-up",8378,832,0,20,0,391.32377,391.32377,20,40,0,40,,,,2015-01-13 15:00,2015-01-15 15:00,,2014-10-08 13:00,2014-10-11 13:00,2014-10-08 13:00,2014-10-11 13:00,2014-10-08 13:00,2014-10-11 13:00,2015-01-13 15:00,2015-01-15 15:00,,PT_Normal,,,,,uzDAuR0fN0S/f9wROBZnqw,,,,N,0,0,,,2014-04-13 07:21,2014-04-14 16:04,admin,admin,
2018,142115,6971,40173,7842,0,N,N,N,CP_Phys,TT_Task,DT_FixedDrtn,TK_NotStart,CZA-TK-0700-1710,Welding,8378,832,0,60,0,489.154713,489.154713,60,120,0,120,,,,2015-01-15 15:00,2015-01-22 15:00,,2014-10-11 13:00,2014-10-18 13:00,2014-10-11 13:00,2014-10-18 13:00,2014-10-11 13:00,2014-10-18 13:00,2015-01-15 15:00,2015-01-22 15:00,,PT_Normal,,,,,5Y3VYQ2lz0WqND6uzLyw7A,,,,N,0,0,,,2014-04-13 07:21,2014-04-14 16:04,admin,admin,
2019,142116,6971,40152,7842,0,N,N,N,CP_Phys,TT_Task,DT_FixedDrtn,TK_NotStart,CZA-TK-0700-1730,"Jacking, Erection and Fit-up",8378,832,0,20,0,456.565259,456.565259,20,40,0,40,,,,2015-01-22 15:00,2015-01-25 15:00,,2014-10-18 13:00,2014-10-20 13:00,2014-10-18 13:00,2014-10-20 13:00,2014-10-18 13:00,2014-10-20 13:00,2015-01-22 15:00,2015-01-25 15:00,,PT_Normal,,,,,qk6sM4OfLEu8ZnE1nWmOAQ,,,,N,0,0,,,2014-04-13 07:21,2014-04-14 16:04,admin,admin,
2020,142117,6971,40152,7842,0,N,N,N,CP_Phys,TT_Task,DT_FixedDrtn,TK_NotStart,CZA-TK-0700-1740,Welding,8378,832,0,60,0,570.706573,570.706573,60,120,0,120,,,,2015-01-25 15:00,2015-02-01 15:00,,2014-10-20 13:00,2014-10-27 13:00,2014-10-20 13:00,2014-10-27 13:00,2014-10-20 13:00,2014-10-27 13:00,2015-01-25 15:00,2015-02-01 15:00,,PT_Normal,,,,,GUXI/e+aiUybTbH1BqupAQ,,,,N,0,0,,,2014-04-13 07:21,2014-04-14 16:04,admin,admin,
2021,142118,6971,40152,7842,0,N,N,N,CP_Phys,TT_Task,DT_FixedDrtn,TK_NotStart,CZA-TK-0700-1750,Inspection,8378,832,0,80,0,114.141315,114.141315,80,0,0,0,,,,2015-01-22 15:00,2015-02-01 15:00,,2014-10-18 13:00,2014-10-27 13:00,2014-10-18 13:00,2014-10-27 13:00,2014-10-18 13:00,2014-10-27 13:00,2015-01-22 15:00,2015-02-01 15:00,,PT_Normal,,,,,XmB3rJVN3ku48plj1HkNoQ,,,,N,0,0,,,2014-04-13 07:21,2014-04-14 16:04,admin,admin,
2022,142119,6971,40202,7842,0,N,N,N,CP_Phys,TT_Task,DT_FixedDrtn,TK_NotStart,CZA-TK-0700-1670,"Jacking,Erection and Fit-up",8378,832,0,20,0,293.4706,293.4706,20,40,0,40,,,,2015-01-04 15:00,2015-01-06 15:00,,2014-09-29 13:00,2014-10-01 13:00,2014-09-29 13:00,2014-10-01 13:00,2014-09-29 13:00,2014-10-01 13:00,2015-01-04 15:00,2015-01-06 15:00,,PT_Normal,,,,,0U2fxrKEc0OaR2dPBdWqoA,,,,N,0,0,,,2014-04-13 07:21,2014-04-14 16:04,admin,admin,
2023,142120,6971,40202,7842,0,N,N,N,CP_Phys,TT_Task,DT_FixedDrtn,TK_NotStart,CZA-TK-0700-1680,Welding,8378,832,0,60,0,366.83825,366.83825,60,120,0,120,,,,2015-01-06 15:00,2015-01-13 15:00,,2014-10-01 13:00,2014-10-08 13:00,2014-10-01 13:00,2014-10-08 13:00,2014-10-01 13:00,2014-10-08 13:00,2015-01-06 15:00,2015-01-13 15:00,,PT_Normal,,,,,KPVEXZvnD0WqafSJVRsI+A,,,,N,0,0,,,2014-04-13 07:21,2014-04-14 16:04,admin,admin,
2024,142121,6971,40202,7842,0,N,N,N,CP_Phys,TT_Task,DT_FixedDrtn,TK_NotStart,CZA-TK-0700-1690,Inspection,8378,832,0,80,0,73.36765,73.36765,80,0,0,0,,,,2015-01-04 15:00,2015-01-13 15:00,,2014-09-29 13:00,2014-10-08 13:00,2014-09-29 13:00,2014-10-08 13:00,2014-09-29 13:00,2014-10-08 13:00,2015-01-04 15:00,2015-01-13 15:00,,PT_Normal,,,,,lqSKevTegUWC1gCq1gklZg,,,,N,0,0,,,2014-04-13 07:21,2014-04-14 16:04,admin,admin,
2025,142122,6971,40194,7842,0,N,N,N,CP_Phys,TT_Task,DT_FixedDrtn,TK_NotStart,CZA-TK-0700-1760,"Jacking, Erection and Fit-up",8378,832,0,20,0,554.438523,554.438523,20,40,0,40,,,,2015-02-01 15:00,2015-02-03 15:00,,2014-10-27 13:00,2014-10-29 13:00,2014-10-27 13:00,2014-10-29 13:00,2014-10-27 13:00,2014-10-29 13:00,2015-02-01 15:00,2015-02-03 15:00,,PT_Normal,,,,,wO/mgqU4Gk6mul+tsafZqA,,,,N,0,0,,,2014-04-13 07:21,2014-04-14 16:04,admin,admin,
2026,142123,6971,40194,7842,0,N,N,N,CP_Phys,TT_Task,DT_FixedDrtn,TK_NotStart,CZA-TK-0700-1770,Welding,8378,832,0,60,0,693.048154,693.048154,60,120,0,120,,,,2015-02-03 15:00,2015-02-10 15:00,,2014-10-29 13:00,2014-11-05 13:00,2014-10-29 13:00,2014-11-05 13:00,2014-10-29 13:00,2014-11-05 13:00,2015-02-03 15:00,2015-02-10 15:00,,PT_Normal,,,,,zd9yXO+dKUWpb9/9lyc6Fg,,,,N,0,0,,,2014-04-13 07:21,2014-04-14 16:04,admin,admin,
2027,142124,6971,40194,7842,0,N,N,N,CP_Phys,TT_Task,DT_FixedDrtn,TK_NotStart,CZA-TK-0700-1780,Inspection,8378,832,0,80,0,138.609631,138.609631,80,0,0,0,,,,2015-02-01 15:00,2015-02-10 15:00,,2014-10-27 13:00,2014-11-05 13:00,2014-10-27 13:00,2014-11-05 13:00,2014-10-27 13:00,2014-11-05 13:00,2015-02-01 15:00,2015-02-10 15:00,,PT_Normal,,,,,+6WJ58EUZE6r0rTFyDw+iA,,,,N,0,0,,,2014-04-13 07:21,2014-04-14 16:04,admin,admin,
2028,142125,6971,40195,7842,0,N,N,N,CP_Phys,TT_Task,DT_FixedDrtn,TK_NotStart,CZA-TK-0700-1880,Erection and Fit-up,8378,832,0,30,0,0,0,30,60,0,60,,,,2015-03-09 15:00,2015-03-12 15:00,,2014-12-02 13:00,2014-12-06 13:00,2014-12-02 13:00,2014-12-06 13:00,2014-12-02 13:00,2014-12-06 13:00,2015-03-09 15:00,2015-03-12 15:00,,PT_Normal,,,,,8gPlfcJAq0Gk0DtrgsfEuw,,,,N,0,0,,,2014-04-13 07:21,2014-04-14 16:04,admin,admin,
2029,142126,6971,40195,7842,0,N,N,N,CP_Phys,TT_Task,DT_FixedDrtn,TK_NotStart,CZA-TK-0700-1890,Welding,8378,832,0,70,0,0,0,70,140,0,140,,,,2015-03-12 15:00,2015-03-21 15:00,,2014-12-06 13:00,2014-12-14 13:00,2014-12-06 13:00,2014-12-14 13:00,2014-12-06 13:00,2014-12-14 13:00,2015-03-12 15:00,2015-03-21 15:00,,PT_Normal,,,,,NFIAmmPmWkia7TtDuppwlg,,,,N,0,0,,,2014-04-13 07:21,2014-04-14 16:04,admin,admin,
2030,142127,6971,40195,7842,0,N,N,N,CP_Phys,TT_Task,DT_FixedDrtn,TK_NotStart,CZA-TK-0700-1900,Inspection,8378,832,0,100,0,0,0,100,0,0,0,,,,2015-03-09 15:00,2015-03-21 15:00,,2014-12-02 13:00,2014-12-14 13:00,2014-12-02 13:00,2014-12-14 13:00,2014-12-02 13:00,2014-12-14 13:00,2015-03-09 15:00,2015-03-21 15:00,,PT_Normal,,,,,xlIOE83qGUeKAOCgG2JUiA,,,,N,0,0,,,2014-04-13 07:21,2014-04-14 16:04,admin,admin,
2031,142128,6971,40196,7842,0,N,N,N,CP_Phys,TT_Task,DT_FixedDrtn,TK_NotStart,CZA-TK-0700-1460,Erection and Fit-up,8378,832,0,30,0,0,0,30,60,0,60,,,,2014-10-21 15:00,2014-10-25 15:00,,2014-07-16 13:00,2014-07-20 13:00,2014-07-16 13:00,2014-07-20 13:00,2014-07-16 13:00,2014-07-20 13:00,2014-10-21 15:00,2014-10-25 15:00,,PT_Normal,,,,,mG+zlr2LNUWPzT1VPJ2Msw,,,,N,0,0,,,2014-04-13 07:21,2014-04-14 16:04,admin,admin,
2032,142129,6971,40196,7842,0,N,N,N,CP_Phys,TT_Task,DT_FixedDrtn,TK_NotStart,CZA-TK-0700-1470,Welding,8378,832,0,30,0,0,0,30,60,0,60,,,,2014-10-25 15:00,2014-10-28 15:00,,2014-07-20 13:00,2014-07-23 13:00,2014-07-20 13:00,2014-07-23 13:00,2014-07-20 13:00,2014-07-23 13:00,2014-10-25 15:00,2014-10-28 15:00,,PT_Normal,,,,,GizorjN29kW3mcNVKWXDFg,,,,N,0,0,,,2014-04-13 07:21,2014-04-14 16:04,admin,admin,
2033,142130,6971,40196,7842,0,N,N,N,CP_Phys,TT_Task,DT_FixedDrtn,TK_NotStart,CZA-TK-0700-1480,Inspection,8378,832,0,60,0,0,0,60,0,0,0,,,,2014-10-21 15:00,2014-10-28 15:00,,2014-07-16 13:00,2014-07-23 13:00,2014-07-16 13:00,2014-07-23 13:00,2014-07-16 13:00,2014-07-23 13:00,2014-10-21 15:00,2014-10-28 15:00,,PT_Normal,,,,,0h8hyKEbu0i3OJuR/Z+0CA,,,,N,0,0,,,2014-04-13 07:21,2014-04-14 16:04,admin,admin,
2034,142131,6971,40238,7842,0,N,N,N,CP_Phys,TT_Task,DT_FixedDrtn,TK_NotStart,CZA-TK-0700-1490,Laying and Fit-up,8378,832,0,40,0,905.446519,905.446519,40,80,0,80,,,,2014-10-28 15:00,2014-11-02 15:00,,2014-07-23 13:00,2014-07-28 13:00,2014-07-23 13:00,2014-07-28 13:00,2014-07-23 13:00,2014-07-28 13:00,2014-10-28 15:00,2014-11-02 15:00,,PT_Normal,,,,,W+/DW2Gl8kaWJo4dCgjZMw,,,,N,0,0,,,2014-04-13 07:21,2014-04-14 16:04,admin,admin,
2035,142132,6971,40238,7842,0,N,N,N,CP_Phys,TT_Task,DT_FixedDrtn,TK_NotStart,CZA-TK-0700-1500,Welding,8378,832,0,80,0,1131.808149,1131.808149,80,160,0,160,,,,2014-11-02 15:00,2014-11-11 15:00,,2014-07-28 13:00,2014-08-06 13:00,2014-07-28 13:00,2014-08-06 13:00,2014-07-28 13:00,2014-08-06 13:00,2014-11-02 15:00,2014-11-11 15:00,,PT_Normal,,,,,J6Itqgya70CHkYRx7aJL1A,,,,N,0,0,,,2014-04-13 07:21,2014-04-14 16:04,admin,admin,
2036,142133,6971,40238,7842,0,N,N,N,CP_Phys,TT_Task,DT_FixedDrtn,TK_NotStart,CZA-TK-0700-1510,Inspection,8378,832,0,120,0,226.36163,226.36163,120,0,0,0,,,,2014-10-28 15:00,2014-11-11 15:00,,2014-07-23 13:00,2014-08-06 13:00,2014-07-23 13:00,2014-08-06 13:00,2014-07-23 13:00,2014-08-06 13:00,2014-10-28 15:00,2014-11-11 15:00,,PT_Normal,,,,,bA4y7Wo/gEOhG9mezDjUMA,,,,N,0,0,,,2014-04-13 07:21,2014-04-14 16:04,admin,admin,
2037,142134,6971,40198,7842,0,N,N,N,CP_Phys,TT_Task,DT_FixedDrtn,TK_NotStart,CZA-TK-0700-1400,Laying and Fit-up,8378,832,0,40,0,519.627285,519.627285,40,80,0,80,,,,2014-09-17 15:00,2014-09-22 15:00,,2014-06-12 13:00,2014-06-17 13:00,2014-06-12 13:00,2014-06-17 13:00,2014-06-12 13:00,2014-06-17 13:00,2014-09-17 15:00,2014-09-22 15:00,,PT_Normal,,,,,pAU4fBq6tU2dTirYM8f7RQ,,,,N,0,0,,,2014-04-13 07:21,2014-04-14 16:04,admin,admin,
2038,142135,6971,40198,7842,0,N,N,N,CP_Phys,TT_Task,DT_FixedDrtn,TK_NotStart,CZA-TK-0700-1410,Welding,8378,832,0,110,0,649.534106,649.534106,110,220,0,220,,,,2014-09-22 15:00,2014-10-05 15:00,,2014-06-17 13:00,2014-06-30 13:00,2014-06-17 13:00,2014-06-30 13:00,2014-06-17 13:00,2014-06-30 13:00,2014-09-22 15:00,2014-10-05 15:00,,PT_Normal,,,,,HQ009+zaXkeHOWb3lmrzLA,,,,N,0,0,,,2014-04-13 07:21,2014-04-14 16:04,admin,admin,
2039,142136,6971,40198,7842,0,N,N,N,CP_Phys,TT_Task,DT_FixedDrtn,TK_NotStart,CZA-TK-0700-1420,Inspection,8378,832,0,150,0,129.906821,129.906821,150,0,0,0,,,,2014-09-17 15:00,2014-10-05 15:00,,2014-06-12 13:00,2014-06-30 13:00,2014-06-12 13:00,2014-06-30 13:00,2014-06-12 13:00,2014-06-30 13:00,2014-09-17 15:00,2014-10-05 15:00,,PT_Normal,,,,,G/iq51IWFEq/YAfp9cxvdw,,,,N,0,0,,,2014-04-13 07:21,2014-04-14 16:04,admin,admin,
2040,142137,6971,40199,7842,0,N,N,N,CP_Phys,TT_Task,DT_FixedDrtn,TK_NotStart,CZA-TK-0700-1610,"Jacking, Erection and Fit-up",8378,832,0,20,0,260.858392,260.858392,20,40,0,40,,,,2014-12-16 15:00,2014-12-18 15:00,,2014-09-10 13:00,2014-09-13 13:00,2014-09-10 13:00,2014-09-13 13:00,2014-09-10 13:00,2014-09-13 13:00,2014-12-16 15:00,2014-12-18 15:00,,PT_Normal,,,,,+PsTo+ZsJEiksCoHOUXaDw,,,,N,0,0,,,2014-04-13 07:21,2014-04-14 16:04,admin,admin,
2041,142138,6971,40199,7842,0,N,N,N,CP_Phys,TT_Task,DT_FixedDrtn,TK_NotStart,CZA-TK-0700-1620,Welding,8378,832,0,60,0,326.07299,326.07299,60,120,0,120,,,,2014-12-18 15:00,2014-12-25 15:00,,2014-09-13 13:00,2014-09-20 13:00,2014-09-13 13:00,2014-09-20 13:00,2014-09-13 13:00,2014-09-20 13:00,2014-12-18 15:00,2014-12-25 15:00,,PT_Normal,,,,,vXRFPZHMvUiBq8dxzdVGqg,,,,N,0,0,,,2014-04-13 07:21,2014-04-14 16:04,admin,admin,
2042,142139,6971,40199,7842,0,N,N,N,CP_Phys,TT_Task,DT_FixedDrtn,TK_NotStart,CZA-TK-0700-1630,Inspection,8378,832,0,80,0,65.214598,65.214598,80,0,0,0,,,,2014-12-16 15:00,2014-12-25 15:00,,2014-09-10 13:00,2014-09-20 13:00,2014-09-10 13:00,2014-09-20 13:00,2014-09-10 13:00,2014-09-20 13:00,2014-12-16 15:00,2014-12-25 15:00,,PT_Normal,,,,,E218Y650EEy3OciDSGb6mw,,,,N,0,0,,,2014-04-13 07:21,2014-04-14 16:04,admin,admin,
2043,142140,6971,40200,7842,0,N,N,N,CP_Phys,TT_Task,DT_FixedDrtn,TK_NotStart,CZA-TK-0700-1640,"Jacking,Erection and Fit-up",8378,832,0,20,0,260.858392,260.858392,20,40,0,40,,,,2014-12-25 15:00,2014-12-28 15:00,,2014-09-20 13:00,2014-09-22 13:00,2014-09-20 13:00,2014-09-22 13:00,2014-09-20 13:00,2014-09-22 13:00,2014-12-25 15:00,2014-12-28 15:00,,PT_Normal,,,,,5jErtssY4UKVrCXhvXjOQQ,,,,N,0,0,,,2014-04-13 07:21,2014-04-14 16:04,admin,admin,
2044,142141,6971,40200,7842,0,N,N,N,CP_Phys,TT_Task,DT_FixedDrtn,TK_NotStart,CZA-TK-0700-1650,Welding,8378,832,0,60,0,326.07299,326.07299,60,120,0,120,,,,2014-12-28 15:00,2015-01-04 15:00,,2014-09-22 13:00,2014-09-29 13:00,2014-09-22 13:00,2014-09-29 13:00,2014-09-22 13:00,2014-09-29 13:00,2014-12-28 15:00,2015-01-04 15:00,,PT_Normal,,,,,AQVYxDKhzkSAnY005mtEYQ,,,,N,0,0,,,2014-04-13 07:21,2014-04-14 16:04,admin,admin,
2045,142142,6971,40200,7842,0,N,N,N,CP_Phys,TT_Task,DT_FixedDrtn,TK_NotStart,CZA-TK-0700-1660,Inspection,8378,832,0,80,0,65.214598,65.214598,80,0,0,0,,,,2014-12-25 15:00,2015-01-04 15:00,,2014-09-20 13:00,2014-09-29 13:00,2014-09-20 13:00,2014-09-29 13:00,2014-09-20 13:00,2014-09-29 13:00,2014-12-25 15:00,2015-01-04 15:00,,PT_Normal,,,,,6AbRYeyJSEilzexKVRGJTg,,,,N,0,0,,,2014-04-13 07:21,2014-04-14 16:04,admin,admin,
2046,142143,6971,40136,7842,0,N,N,N,CP_Phys,TT_Task,DT_FixedDrtn,TK_NotStart,CZA-TK-0700-1280,Erection and Fit-up,8378,832,0,20,0,260.858392,260.858392,20,40,0,40,,,,2014-08-12 15:00,2014-08-14 15:00,,2014-05-07 13:00,2014-05-10 13:00,2014-05-07 13:00,2014-05-10 13:00,2014-05-07 13:00,2014-05-10 13:00,2014-08-12 15:00,2014-08-14 15:00,,PT_Normal,,,,,wMFaZUZStkG5Fn+FCOGoBw,,,,N,0,0,,,2014-04-13 07:21,2014-04-14 16:04,admin,admin,
2047,142144,6971,40136,7842,0,N,N,N,CP_Phys,TT_Task,DT_FixedDrtn,TK_NotStart,CZA-TK-0700-1290,Welding,8378,832,0,60,0,326.07299,326.07299,60,120,0,120,,,,2014-08-14 15:00,2014-08-21 15:00,,2014-05-10 13:00,2014-05-17 13:00,2014-05-10 13:00,2014-05-17 13:00,2014-05-10 13:00,2014-05-17 13:00,2014-08-14 15:00,2014-08-21 15:00,,PT_Normal,,,,,hq4qNHKvZkuh7XDIz3nj0A,,,,N,0,0,,,2014-04-13 07:21,2014-04-14 16:04,admin,admin,
2048,142145,6971,40136,7842,0,N,N,N,CP_Phys,TT_Task,DT_FixedDrtn,TK_NotStart,CZA-TK-0700-1300,Inspection,8378,832,0,80,0,65.214598,65.214598,80,0,0,0,,,,2014-08-12 15:00,2014-08-21 15:00,,2014-05-07 13:00,2014-05-17 13:00,2014-05-07 13:00,2014-05-17 13:00,2014-05-07 13:00,2014-05-17 13:00,2014-08-12 15:00,2014-08-21 15:00,,PT_Normal,,,,,0gA8j+CqJkK2uZSyJ/Rmeg,,,,N,0,0,,,2014-04-13 07:21,2014-04-14 16:04,admin,admin,
2049,142146,6971,40311,7842,0,N,N,N,CP_Phys,TT_Task,DT_FixedDrtn,TK_NotStart,CZA-TK-0700-1310,Erection and Fit-up,8378,832,0,20,0,168.471671,168.471671,20,40,0,40,,,,2014-08-21 15:00,2014-08-24 15:00,,2014-05-17 13:00,2014-05-19 13:00,2014-05-17 13:00,2014-05-19 13:00,2014-05-17 13:00,2014-05-19 13:00,2014-08-21 15:00,2014-08-24 15:00,,PT_Normal,,,,,2bNTmaGoSUCjJB8Fr/BvVw,,,,N,0,0,,,2014-04-13 07:21,2014-04-14 16:04,admin,admin,
2050,142147,6971,40311,7842,0,N,N,N,CP_Phys,TT_Task,DT_FixedDrtn,TK_NotStart,CZA-TK-0700-1320,Welding,8378,832,0,60,0,210.589589,210.589589,60,120,0,120,,,,2014-08-24 15:00,2014-08-31 15:00,,2014-05-19 13:00,2014-05-26 13:00,2014-05-19 13:00,2014-05-26 13:00,2014-05-19 13:00,2014-05-26 13:00,2014-08-24 15:00,2014-08-31 15:00,,PT_Normal,,,,,MbnX4O2WmkSwQbHlxIusFA,,,,N,0,0,,,2014-04-13 07:21,2014-04-14 16:04,admin,admin,
2051,142148,6971,40311,7842,0,N,N,N,CP_Phys,TT_Task,DT_FixedDrtn,TK_NotStart,CZA-TK-0700-1330,Inspection,8378,832,0,80,0,42.117918,42.117918,80,0,0,0,,,,2014-08-21 15:00,2014-08-31 15:00,,2014-05-17 13:00,2014-05-26 13:00,2014-05-17 13:00,2014-05-26 13:00,2014-05-17 13:00,2014-05-26 13:00,2014-08-21 15:00,2014-08-31 15:00,,PT_Normal,,,,,ziACiHeivke5ZJopPyrUSQ,,,,N,0,0,,,2014-04-13 07:21,2014-04-14 16:04,admin,admin,
2052,142149,6971,40312,7842,0,N,N,N,CP_Phys,TT_Task,DT_FixedDrtn,TK_NotStart,CZA-TK-0700-1340,"Cutting, Installation and Fit-up",8378,832,0,20,0,26.362228,26.362228,20,40,0,40,,,,2014-08-31 15:00,2014-09-02 15:00,,2014-05-26 13:00,2014-05-28 13:00,2014-05-26 13:00,2014-05-28 13:00,2014-05-26 13:00,2014-05-28 13:00,2014-08-31 15:00,2014-09-02 15:00,,PT_Normal,,,,,cjKQd7p9OUamHNoA6MQC1Q,,,,N,0,0,,,2014-04-13 07:21,2014-04-14 16:04,admin,admin,
2053,142150,6971,40312,7842,0,N,N,N,CP_Phys,TT_Task,DT_FixedDrtn,TK_NotStart,CZA-TK-0700-1350,Welding,8378,832,0,50,0,32.952785,32.952785,50,100,0,100,,,,2014-09-02 15:00,2014-09-08 15:00,,2014-05-28 13:00,2014-06-03 13:00,2014-05-28 13:00,2014-06-03 13:00,2014-05-28 13:00,2014-06-03 13:00,2014-09-02 15:00,2014-09-08 15:00,,PT_Normal,,,,,jEEx0AcY00KcCbK/38PdIg,,,,N,0,0,,,2014-04-13 07:21,2014-04-14 16:04,admin,admin,
2054,142151,6971,40312,7842,0,N,N,N,CP_Phys,TT_Task,DT_FixedDrtn,TK_NotStart,CZA-TK-0700-1360,Inspection,8378,832,0,70,0,6.590557,6.590557,70,0,0,0,,,,2014-08-31 15:00,2014-09-08 15:00,,2014-05-26 13:00,2014-06-03 13:00,2014-05-26 13:00,2014-06-03 13:00,2014-05-26 13:00,2014-06-03 13:00,2014-08-31 15:00,2014-09-08 15:00,,PT_Normal,,,,,D4kLILW4YkCQCeOUHiDC+w,,,,N,0,0,,,2014-04-13 07:21,2014-04-14 16:04,admin,admin,
2055,142152,6971,40313,7842,0,N,N,N,CP_Phys,TT_Task,DT_FixedDrtn,TK_NotStart,CZA-TK-0700-1910,Installation of Primary and Secondary Seal,8378,832,0,60,0,0,0,60,0,0,0,,,,2015-03-21 15:00,2015-03-28 15:00,,2014-12-14 13:00,2014-12-21 13:00,2014-12-14 13:00,2014-12-21 13:00,2014-12-14 13:00,2014-12-21 13:00,2015-03-21 15:00,2015-03-28 15:00,,PT_Normal,,,,,uCr9Tz3B+UO59Up029dNgA,,,,N,0,0,,,2014-04-13 07:21,2014-04-14 16:04,admin,admin,
2056,142153,6971,40313,7842,0,N,N,N,CP_Phys,TT_Task,DT_FixedDrtn,TK_NotStart,CZA-TK-0700-1920,Inspection,8378,832,0,10,0,0,0,10,0,0,0,,,,2015-03-28 15:00,2015-03-29 15:00,,2014-12-21 13:00,2014-12-22 13:00,2014-12-21 13:00,2014-12-22 13:00,2014-12-21 13:00,2014-12-22 13:00,2015-03-28 15:00,2015-03-29 15:00,,PT_Normal,,,,,l57FHBt8jUqz70+h3DEBDw,,,,N,0,0,,,2014-04-13 07:21,2014-04-14 16:04,admin,admin,
2057,142154,6971,40205,7842,0,N,N,N,CP_Phys,TT_Task,DT_FixedDrtn,TK_NotStart,CZA-TK-0700-1790,"Jacking, Erection and Fit-up",8378,832,0,20,0,619.699449,619.699449,20,40,0,40,,,,2015-02-10 15:00,2015-02-12 15:00,,2014-11-05 13:00,2014-11-08 13:00,2014-11-05 13:00,2014-11-08 13:00,2014-11-05 13:00,2014-11-08 13:00,2015-02-10 15:00,2015-02-12 15:00,,PT_Normal,,,,,tfsifvEInEmkZfGbo07s7g,,,,N,0,0,,,2014-04-13 07:21,2014-04-14 16:04,admin,admin,
2058,142155,6971,40205,7842,0,N,N,N,CP_Phys,TT_Task,DT_FixedDrtn,TK_NotStart,CZA-TK-0700-1800,Welding,8378,832,0,60,0,774.624311,774.624311,60,120,0,120,,,,2015-02-12 15:00,2015-02-19 15:00,,2014-11-08 13:00,2014-11-15 13:00,2014-11-08 13:00,2014-11-15 13:00,2014-11-08 13:00,2014-11-15 13:00,2015-02-12 15:00,2015-02-19 15:00,,PT_Normal,,,,,Izo3zhbqmkqPYhyDONHEVw,,,,N,0,0,,,2014-04-13 07:21,2014-04-14 16:04,admin,admin,
2059,142156,6971,40205,7842,0,N,N,N,CP_Phys,TT_Task,DT_FixedDrtn,TK_NotStart,CZA-TK-0700-1810,Inspection,8378,832,0,80,0,154.924862,154.924862,80,0,0,0,,,,2015-02-10 15:00,2015-02-19 15:00,,2014-11-05 13:00,2014-11-15 13:00,2014-11-05 13:00,2014-11-15 13:00,2014-11-05 13:00,2014-11-15 13:00,2015-02-10 15:00,2015-02-19 15:00,,PT_Normal,,,,,iiaW1mZQDkGVSL7r1eXjkw,,,,N,0,0,,,2014-04-13 07:21,2014-04-14 16:04,admin,admin,
2060,142157,6971,40206,7842,0,N,N,N,CP_Phys,TT_Task,DT_FixedDrtn,TK_NotStart,CZA-TK-0700-1820,"Jacking, Erection and Fit-up",8378,832,0,20,0,694.819763,694.819763,20,40,0,40,,,,2015-02-19 15:00,2015-02-22 15:00,,2014-11-15 13:00,2014-11-17 13:00,2014-11-15 13:00,2014-11-17 13:00,2014-11-15 13:00,2014-11-17 13:00,2015-02-19 15:00,2015-02-22 15:00,,PT_Normal,,,,,xLrCYfVYCEuGQUBi3+2uow,,,,N,0,0,,,2014-04-13 07:21,2014-04-14 16:04,admin,admin,
2061,142158,6971,40206,7842,0,N,N,N,CP_Phys,TT_Task,DT_FixedDrtn,TK_NotStart,CZA-TK-0700-1830,Welding,8378,832,0,60,0,868.524703,868.524703,60,120,0,120,,,,2015-02-22 15:00,2015-03-01 15:00,,2014-11-17 13:00,2014-11-24 13:00,2014-11-17 13:00,2014-11-24 13:00,2014-11-17 13:00,2014-11-24 13:00,2015-02-22 15:00,2015-03-01 15:00,,PT_Normal,,,,,mWhwlpqnBkCDOthoogxzvA,,,,N,0,0,,,2014-04-13 07:21,2014-04-14 16:04,admin,admin,
2062,142159,6971,40206,7842,0,N,N,N,CP_Phys,TT_Task,DT_FixedDrtn,TK_NotStart,CZA-TK-0700-1840,Inspection,8378,832,0,80,0,173.704941,173.704941,80,0,0,0,,,,2015-02-19 15:00,2015-03-01 15:00,,2014-11-15 13:00,2014-11-24 13:00,2014-11-15 13:00,2014-11-24 13:00,2014-11-15 13:00,2014-11-24 13:00,2015-02-19 15:00,2015-03-01 15:00,,PT_Normal,,,,,s5JSNj65sUeEwgBb1jQXMA,,,,N,0,0,,,2014-04-13 07:21,2014-04-14 16:04,admin,admin,
2063,142160,6971,40207,7842,0,N,N,N,CP_Phys,TT_Task,DT_FixedDrtn,TK_NotStart,CZA-TK-0700-1850,"Lay-out, Cutting, and Fit-up",8378,832,0,20,0,0,0,20,40,0,40,,,,2015-03-01 15:00,2015-03-03 15:00,,2014-11-24 13:00,2014-11-26 13:00,2014-11-24 13:00,2014-11-26 13:00,2014-11-24 13:00,2014-11-26 13:00,2015-03-01 15:00,2015-03-03 15:00,,PT_Normal,,,,,5YEwFx6UKUW4Pi4/D4Pbpw,,,,N,0,0,,,2014-04-13 07:21,2014-04-14 16:04,admin,admin,
2064,142161,6971,40207,7842,0,N,N,N,CP_Phys,TT_Task,DT_FixedDrtn,TK_NotStart,CZA-TK-0700-1860,Welding,8378,832,0,50,0,0,0,50,100,0,100,,,,2015-03-03 15:00,2015-03-09 15:00,,2014-11-26 13:00,2014-12-02 13:00,2014-11-26 13:00,2014-12-02 13:00,2014-11-26 13:00,2014-12-02 13:00,2015-03-03 15:00,2015-03-09 15:00,,PT_Normal,,,,,vaD9yxmhvUuryefAVfraJQ,,,,N,0,0,,,2014-04-13 07:21,2014-04-14 16:04,admin,admin,
2065,142162,6971,40207,7842,0,N,N,N,CP_Phys,TT_Task,DT_FixedDrtn,TK_NotStart,CZA-TK-0700-1870,Inspection,8378,832,0,70,0,0,0,70,0,0,0,,,,2015-03-01 15:00,2015-03-09 15:00,,2014-11-24 13:00,2014-12-02 13:00,2014-11-24 13:00,2014-12-02 13:00,2014-11-24 13:00,2014-12-02 13:00,2015-03-01 15:00,2015-03-09 15:00,,PT_Normal,,,,,ItaDKeQbUkCEEbZT6mfdoA,,,,N,0,0,,,2014-04-13 07:21,2014-04-14 16:04,admin,admin,
2066,142163,6971,40208,7842,0,N,N,N,CP_Phys,TT_Task,DT_FixedDrtn,TK_NotStart,CZA-TK-0700-1220,Laying and Fit-up,8378,832,0,20,0,107.608544,107.608544,20,40,0,40,,,,2014-07-17 15:00,2014-07-20 15:00,,2014-04-12 13:00,2014-04-14 13:00,2014-04-12 13:00,2014-04-14 13:00,2014-04-12 13:00,2014-04-14 13:00,2014-07-17 15:00,2014-07-20 15:00,,PT_Normal,,,,,CQ9f0cjTNkioL9yGwtbBJg,,,,N,0,0,,,2014-04-13 07:21,2014-04-14 16:04,admin,admin,
2067,142164,6971,40208,7842,0,N,N,N,CP_Phys,TT_Task,DT_FixedDrtn,TK_NotStart,CZA-TK-0700-1240,Inspection,8378,832,0,60,0,26.902136,26.902136,60,0,0,0,,,,2014-07-17 15:00,2014-07-24 15:00,,2014-04-12 13:00,2014-04-19 13:00,2014-04-12 13:00,2014-04-19 13:00,2014-04-12 13:00,2014-04-19 13:00,2014-07-17 15:00,2014-07-24 15:00,,PT_Normal,,,,,O1X9p/FBHk+5V7b5VxEhTw,,,,N,0,0,,,2014-04-13 07:21,2014-04-14 16:04,admin,admin,
2068,142165,6971,40208,7842,0,N,N,N,CP_Phys,TT_Task,DT_FixedDrtn,TK_NotStart,CZA-TK-0700-1230,Welding,8378,832,0,40,0,134.51068,134.51068,40,80,0,80,,,,2014-07-20 15:00,2014-07-24 15:00,,2014-04-14 13:00,2014-04-19 13:00,2014-04-14 13:00,2014-04-19 13:00,2014-04-14 13:00,2014-04-19 13:00,2014-07-20 15:00,2014-07-24 15:00,,PT_Normal,,,,,SFRFsX2RnUiWRU47ZhwtBg,,,,N,0,0,,,2014-04-13 07:21,2014-04-14 16:04,admin,admin,
2069,142166,6971,40191,7842,0,N,N,N,CP_Phys,TT_Task,DT_FixedDrtn,TK_NotStart,CZA-TK-0700-1250,Laying and Fit-up,8378,832,0,40,0,842.402222,842.402222,40,80,0,80,,,,2014-07-24 15:00,2014-07-29 15:00,,2014-04-19 13:00,2014-04-23 13:00,2014-04-19 13:00,2014-04-23 13:00,2014-04-19 13:00,2014-04-23 13:00,2014-07-24 15:00,2014-07-29 15:00,,PT_Normal,,,,,R+T9L9OVzUKDrq2MuifCCQ,,,,N,0,0,,,2014-04-13 07:21,2014-04-14 16:04,admin,admin,
2070,142167,6971,40191,7842,0,N,N,N,CP_Phys,TT_Task,DT_FixedDrtn,TK_NotStart,CZA-TK-0700-1260,Welding,8378,832,0,120,0,1053.002778,1053.002778,120,240,0,240,,,,2014-07-29 15:00,2014-08-12 15:00,,2014-04-23 13:00,2014-05-07 13:00,2014-04-23 13:00,2014-05-07 13:00,2014-04-23 13:00,2014-05-07 13:00,2014-07-29 15:00,2014-08-12 15:00,,PT_Normal,,,,,z/cvVRrxdEGmjcJe9rxNWQ,,,,N,0,0,,,2014-04-13 07:21,2014-04-14 16:04,admin,admin,
2071,142168,6971,40191,7842,0,N,N,N,CP_Phys,TT_Task,DT_FixedDrtn,TK_NotStart,CZA-TK-0700-1270,Inspection,8378,832,0,160,0,210.600556,210.600556,160,0,0,0,,,,2014-07-24 15:00,2014-08-12 15:00,,2014-04-19 13:00,2014-05-07 13:00,2014-04-19 13:00,2014-05-07 13:00,2014-04-19 13:00,2014-05-07 13:00,2014-07-24 15:00,2014-08-12 15:00,,PT_Normal,,,,,DcP1VYLlekKFqhQP7rvGVg,,,,N,0,0,,,2014-04-13 07:21,2014-04-14 16:04,admin,admin,
2072,142169,6971,40210,7842,0,N,N,N,CP_Phys,TT_Task,DT_FixedDrtn,TK_NotStart,CZA-TK-0700-1430,"Laying, Cutting all Holes and Fit-up",8378,832,0,40,0,435.792539,435.792539,40,0,0,0,,,,2014-10-05 15:00,2014-10-09 15:00,,2014-06-30 13:00,2014-07-05 13:00,2014-06-30 13:00,2014-07-05 13:00,2014-06-30 13:00,2014-07-05 13:00,2014-10-05 15:00,2014-10-09 15:00,,PT_Normal,,,,,ulNWeSXPKEqPy5ZKk3jlpg,,,,N,0,0,,,2014-04-13 07:21,2014-04-14 16:04,admin,admin,
2073,142170,6971,40210,7842,0,N,N,N,CP_Phys,TT_Task,DT_FixedDrtn,TK_NotStart,CZA-TK-0700-1440,Welding,8378,872,40,100,0,544.740673,544.740673,100,200,0,200,,,,2014-10-09 15:00,2014-10-21 15:00,,2014-06-30 13:00,2014-07-12 13:00,2014-06-30 13:00,2014-07-12 13:00,2014-06-30 13:00,2014-07-12 13:00,2014-10-09 15:00,2014-10-21 15:00,,PT_Normal,,,,,bG5lGkBT/EiW4mJ+ay+CMg,,,,N,0,0,,,2014-04-13 07:21,2014-04-14 16:04,admin,admin,
2074,142171,6971,40210,7842,0,N,N,N,CP_Phys,TT_Task,DT_FixedDrtn,TK_NotStart,CZA-TK-0700-1450,Inspection,8378,832,0,140,0,108.948135,108.948135,140,0,0,0,,,,2014-10-05 15:00,2014-10-21 15:00,,2014-06-30 13:00,2014-07-16 13:00,2014-06-30 13:00,2014-07-16 13:00,2014-06-30 13:00,2014-07-16 13:00,2014-10-05 15:00,2014-10-21 15:00,,PT_Normal,,,,,lr7qHcCwPEabvRLSBOJQ+w,,,,N,0,0,,,2014-04-13 07:21,2014-04-14 16:04,admin,admin,
2075,142172,6971,40211,7842,0,N,N,N,CP_Phys,TT_Task,DT_FixedDrtn,TK_NotStart,CZA-TK-0700-1370,Erection and Fit-up,8378,832,0,30,0,0,0,30,60,0,60,,,,2014-09-08 15:00,2014-09-11 15:00,,2014-06-03 13:00,2014-06-07 13:00,2014-06-03 13:00,2014-06-07 13:00,2014-06-03 13:00,2014-06-07 13:00,2014-09-08 15:00,2014-09-11 15:00,,PT_Normal,,,,,fY4xKmAD5U2fPL4D46hjmw,,,,N,0,0,,,2014-04-13 07:21,2014-04-14 16:04,admin,admin,
2076,142173,6971,40211,7842,0,N,N,N,CP_Phys,TT_Task,DT_FixedDrtn,TK_NotStart,CZA-TK-0700-1380,Welding,8378,832,0,50,0,0,0,50,100,0,100,,,,2014-09-11 15:00,2014-09-17 15:00,,2014-06-07 13:00,2014-06-12 13:00,2014-06-07 13:00,2014-06-12 13:00,2014-06-07 13:00,2014-06-12 13:00,2014-09-11 15:00,2014-09-17 15:00,,PT_Normal,,,,,Ax3IXAMyvkqD3xxmzE59lg,,,,N,0,0,,,2014-04-13 07:21,2014-04-14 16:04,admin,admin,
2077,142174,6971,40211,7842,0,N,N,N,CP_Phys,TT_Task,DT_FixedDrtn,TK_NotStart,CZA-TK-0700-1390,Inspection,8378,832,0,80,0,0,0,80,0,0,0,,,,2014-09-08 15:00,2014-09-17 15:00,,2014-06-03 13:00,2014-06-12 13:00,2014-06-03 13:00,2014-06-12 13:00,2014-06-03 13:00,2014-06-12 13:00,2014-09-08 15:00,2014-09-17 15:00,,PT_Normal,,,,,ZATlx8wVp0a9Ypil9AL0ZA,,,,N,0,0,,,2014-04-13 07:21,2014-04-14 16:04,admin,admin,
2078,142175,6971,40212,7842,0,N,N,N,CP_Phys,TT_Task,DT_FixedDrtn,TK_NotStart,CZA-TK-0700-1550,"Cutting,lnstallation and Fit-up",8378,832,0,20,0,0,0,20,40,0,40,,,,2014-11-20 15:00,2014-11-23 15:00,,2014-08-16 13:00,2014-08-18 13:00,2014-08-16 13:00,2014-08-18 13:00,2014-08-16 13:00,2014-08-18 13:00,2014-11-20 15:00,2014-11-23 15:00,,PT_Normal,,,,,OgfKrM7T70yPvak0ByxBww,,,,N,0,0,,,2014-04-13 07:21,2014-04-14 16:04,admin,admin,
2079,142176,6971,40212,7842,0,N,N,N,CP_Phys,TT_Task,DT_FixedDrtn,TK_NotStart,CZA-TK-0700-1560,Welding,8378,832,0,60,0,0,0,60,120,0,120,,,,2014-11-23 15:00,2014-11-30 15:00,,2014-08-18 13:00,2014-08-25 13:00,2014-08-18 13:00,2014-08-25 13:00,2014-08-18 13:00,2014-08-25 13:00,2014-11-23 15:00,2014-11-30 15:00,,PT_Normal,,,,,1b0P4Z1fqEOqOZdEK86ycQ,,,,N,0,0,,,2014-04-13 07:21,2014-04-14 16:04,admin,admin,
2080,142177,6971,40212,7842,0,N,N,N,CP_Phys,TT_Task,DT_FixedDrtn,TK_NotStart,CZA-TK-0700-1570,Inspection,8378,832,0,80,0,0,0,80,0,0,0,,,,2014-11-20 15:00,2014-11-30 15:00,,2014-08-16 13:00,2014-08-25 13:00,2014-08-16 13:00,2014-08-25 13:00,2014-08-16 13:00,2014-08-25 13:00,2014-11-20 15:00,2014-11-30 15:00,,PT_Normal,,,,,MtzL/RniBk2a+mvUEwEvFg,,,,N,0,0,,,2014-04-13 07:21,2014-04-14 16:04,admin,admin,
2081,142178,6971,40422,7842,0,N,N,N,CP_Phys,TT_Task,DT_FixedDrtn,TK_NotStart,CZA-TK-0700-1520,Laying and Fit-up,8378,832,0,20,0,0,0,20,40,0,40,,,,2014-11-11 15:00,2014-11-13 15:00,,2014-08-06 13:00,2014-08-09 13:00,2014-08-06 13:00,2014-08-09 13:00,2014-08-06 13:00,2014-08-09 13:00,2014-11-11 15:00,2014-11-13 15:00,,PT_Normal,,,,,kZ3nmHby+02BQJwNTU/kGw,,,,N,0,0,,,2014-04-13 07:21,2014-04-14 16:04,admin,admin,
2082,142179,6971,40422,7842,0,N,N,N,CP_Phys,TT_Task,DT_FixedDrtn,TK_NotStart,CZA-TK-0700-1530,Welding,8378,832,0,60,0,0,0,60,120,0,120,,,,2014-11-13 15:00,2014-11-20 15:00,,2014-08-09 13:00,2014-08-16 13:00,2014-08-09 13:00,2014-08-16 13:00,2014-08-09 13:00,2014-08-16 13:00,2014-11-13 15:00,2014-11-20 15:00,,PT_Normal,,,,,mfZVy+1S2UKGaxbQ729Icw,,,,N,0,0,,,2014-04-13 07:21,2014-04-14 16:04,admin,admin,
2083,142180,6971,40422,7842,0,N,N,N,CP_Phys,TT_Task,DT_FixedDrtn,TK_NotStart,CZA-TK-0700-1540,Inspection,8378,832,0,80,0,0,0,80,0,0,0,,,,2014-11-11 15:00,2014-11-20 15:00,,2014-08-06 13:00,2014-08-16 13:00,2014-08-06 13:00,2014-08-16 13:00,2014-08-06 13:00,2014-08-16 13:00,2014-11-11 15:00,2014-11-20 15:00,,PT_Normal,,,,,0G9yykXMj0KGXKNE1qD05g,,,,N,0,0,,,2014-04-13 07:21,2014-04-14 16:04,admin,admin,
2084,142181,6971,40423,7842,0,N,N,N,CP_Phys,TT_Task,DT_FixedDrtn,TK_NotStart,CZA-TK-0700-1580,Erection and Fit-up,8378,832,0,40,0,0,0,40,80,0,80,,,,2014-11-30 15:00,2014-12-04 15:00,,2014-08-25 13:00,2014-08-30 13:00,2014-08-25 13:00,2014-08-30 13:00,2014-08-25 13:00,2014-08-30 13:00,2014-11-30 15:00,2014-12-04 15:00,,PT_Normal,,,,,rTFKI3lZy0iZhkiKLZZzXg,,,,N,0,0,,,2014-04-13 07:21,2014-04-14 16:04,admin,admin,
2085,142182,6971,40423,7842,0,N,N,N,CP_Phys,TT_Task,DT_FixedDrtn,TK_NotStart,CZA-TK-0700-1590,Welding,8378,832,0,100,0,0,0,100,200,0,200,,,,2014-12-04 15:00,2014-12-16 15:00,,2014-08-30 13:00,2014-09-10 13:00,2014-08-30 13:00,2014-09-10 13:00,2014-08-30 13:00,2014-09-10 13:00,2014-12-04 15:00,2014-12-16 15:00,,PT_Normal,,,,,5Y1/kiPD4km42kHJRKetQQ,,,,N,0,0,,,2014-04-13 07:21,2014-04-14 16:04,admin,admin,
2086,142183,6971,40423,7842,0,N,N,N,CP_Phys,TT_Task,DT_FixedDrtn,TK_NotStart,CZA-TK-0700-1600,Inspection,8378,832,0,140,0,0,0,140,0,0,0,,,,2014-11-30 15:00,2014-12-16 15:00,,2014-08-25 13:00,2014-09-10 13:00,2014-08-25 13:00,2014-09-10 13:00,2014-08-25 13:00,2014-09-10 13:00,2014-11-30 15:00,2014-12-16 15:00,,PT_Normal,,,,,Wwi/Yr8hf06tac8RNH8kYg,,,,N,0,0,,,2014-04-13 07:21,2014-04-14 16:04,admin,admin,
2087,142184,6971,40006,7842,0,N,N,N,CP_Phys,TT_Task,DT_FixedDrtn,TK_NotStart,CZA-TK-0700-1950,Tank Calibration,8378,832,0,50,0,2349.53726,2349.53726,50,0,0,0,,,,2015-06-20 15:00,2015-06-25 15:00,,2015-03-15 13:00,2015-03-21 13:00,2015-03-15 13:00,2015-03-21 13:00,2015-03-15 13:00,2015-03-21 13:00,2015-06-20 15:00,2015-06-25 15:00,,PT_Normal,,,,,ypCKgsCk2UGI7q5oj1XvDA,,,,N,0,0,,,2014-04-13 07:21,2014-04-14 16:04,admin,admin,
2088,142185,6971,40006,7842,0,N,N,N,CP_Phys,TT_Task,DT_FixedDrtn,TK_NotStart,CZA-TK-0700-1960,Tank Handover,8378,832,0,20,0,2349.53726,2349.53726,20,0,0,0,,,,2015-06-25 15:00,2015-06-28 15:00,,2015-03-21 13:00,2015-03-23 13:00,2015-03-21 13:00,2015-03-23 13:00,2015-03-21 13:00,2015-03-23 13:00,2015-06-25 15:00,2015-06-28 15:00,,PT_Normal,,,,,rMqPQCt40UGm3NX9BtotVg,,,,N,0,0,,,2014-04-13 07:21,2014-04-14 16:04,admin,admin,
2089,142186,6971,39939,7842,0,N,N,N,CP_Phys,TT_Task,DT_FixedDrtn,TK_NotStart,CZA-TK-0700-1940,"Blasting and Painting (Shell, Roof & Bottom)-Outside & Inside",8378,832,0,360,0,7048.611779,7048.611779,360,0,0,0,,,,2015-05-09 15:00,2015-06-20 15:00,,2015-02-01 13:00,2015-03-15 13:00,2015-02-01 13:00,2015-03-15 13:00,2015-02-01 13:00,2015-03-15 13:00,2015-05-09 15:00,2015-06-20 15:00,,PT_Normal,,,,,a9CMaWSyS06xua1VOqoy6Q,,,,N,0,0,,,2014-04-13 07:21,2014-04-14 16:04,admin,admin,
2090,142187,6971,40143,7842,0,N,N,N,CP_Phys,TT_Task,DT_FixedDrtn,TK_NotStart,CZA-TK-0735-1482,"Cutting,lnstallation and Fit-up",8380,1692,0,20,0,0,0,20,60,0,60,,,,2015-01-22 15:00,2015-01-25 15:00,,2014-07-09 13:00,2014-07-12 13:00,2014-07-09 13:00,2014-07-12 13:00,2014-07-09 13:00,2014-07-12 13:00,2015-01-22 15:00,2015-01-25 15:00,,PT_Normal,,,,,w0gRE41l9k+v77e3KgiRKQ,NFv5Q1wFJ0+ITpaj98Dwhw,,,N,0,0,,,2014-04-13 07:21,2014-04-14 16:04,admin,admin,
2091,142188,6971,40143,7842,0,N,N,N,CP_Phys,TT_Task,DT_FixedDrtn,TK_NotStart,CZA-TK-0735-1483,Welding,8380,1692,0,40,0,0,0,40,120,0,120,,,,2015-01-25 15:00,2015-01-29 15:00,,2014-07-12 13:00,2014-07-16 13:00,2014-07-12 13:00,2014-07-16 13:00,2014-07-12 13:00,2014-07-16 13:00,2015-01-25 15:00,2015-01-29 15:00,,PT_Normal,,,,,dXtiJwcn80W0BeN1pKCmgg,dUGSISLWgE25NLdt5P3qZg,,,N,0,0,,,2014-04-13 07:21,2014-04-14 16:04,admin,admin,
2092,142189,6971,40143,7842,0,N,N,N,CP_Phys,TT_Task,DT_FixedDrtn,TK_NotStart,CZA-TK-0735-1484,Inspection,8380,1692,0,60,0,0,0,60,0,0,0,,,,2015-01-22 15:00,2015-01-29 15:00,,2014-07-09 13:00,2014-07-16 13:00,2014-07-09 13:00,2014-07-16 13:00,2014-07-09 13:00,2014-07-16 13:00,2015-01-22 15:00,2015-01-29 15:00,,PT_Normal,,,,,5yu2XwJ9X0+tAwUtAFt71Q,IxQjD8WKFU+GPuNpU34ywg,,,N,0,0,,,2014-04-13 07:21,2014-04-14 16:04,admin,admin,
2093,142190,6971,40149,7842,0,N,N,N,CP_Phys,TT_Task,DT_FixedDrtn,TK_NotStart,CZA-TK-0735-1485,Erection and Fit-up,8380,1692,0,40,0,0,0,40,120,0,120,,,,2015-01-29 15:00,2015-02-03 15:00,,2014-07-16 13:00,2014-07-21 13:00,2014-07-16 13:00,2014-07-21 13:00,2014-07-16 13:00,2014-07-21 13:00,2015-01-29 15:00,2015-02-03 15:00,,PT_Normal,,,,,0xEMt6YPkU6YhyiC0RuBBw,U0AJNDwBwkKD70zvGzUnng,,,N,0,0,,,2014-04-13 07:21,2014-04-14 16:04,admin,admin,
2094,142191,6971,40149,7842,0,N,N,N,CP_Phys,TT_Task,DT_FixedDrtn,TK_NotStart,CZA-TK-0735-1486,Welding,8380,1692,0,90,0,0,0,90,270,0,270,,,,2015-02-03 15:00,2015-02-14 15:00,,2014-07-21 13:00,2014-07-31 13:00,2014-07-21 13:00,2014-07-31 13:00,2014-07-21 13:00,2014-07-31 13:00,2015-02-03 15:00,2015-02-14 15:00,,PT_Normal,,,,,HrhYWgk960abjhQNsRGagA,oihehVr49kWQ2bBVT+VCiQ,,,N,0,0,,,2014-04-13 07:21,2014-04-14 16:04,admin,admin,
2095,142192,6971,40149,7842,0,N,N,N,CP_Phys,TT_Task,DT_FixedDrtn,TK_NotStart,CZA-TK-0735-1487,Inspection,8380,1692,0,130,0,0,0,130,0,0,0,,,,2015-01-29 15:00,2015-02-14 15:00,,2014-07-16 13:00,2014-07-31 13:00,2014-07-16 13:00,2014-07-31 13:00,2014-07-16 13:00,2014-07-31 13:00,2015-01-29 15:00,2015-02-14 15:00,,PT_Normal,,,,,W7l4fSjYMEa6Cax1XFCl7g,SBPy3AuGMUWTsvbkxCDqBA,,,N,0,0,,,2014-04-13 07:21,2014-04-14 16:04,admin,admin,
2096,142193,6971,40181,7842,0,N,N,N,CP_Phys,TT_Task,DT_FixedDrtn,TK_NotStart,CZA-TK-0735-1488,"Jacking, Erection and Fit-up",8380,1692,0,20,0,147.315855,147.315855,20,60,0,60,,,,2015-02-14 15:00,2015-02-16 15:00,,2014-07-31 13:00,2014-08-03 13:00,2014-07-31 13:00,2014-08-03 13:00,2014-07-31 13:00,2014-08-03 13:00,2015-02-14 15:00,2015-02-16 15:00,,PT_Normal,,,,,jQBTq4rUXECGnF0hK5jS1g,UkJ5ItzpEESPUJtOwfu68Q,,,N,0,0,,,2014-04-13 07:21,2014-04-14 16:04,admin,admin,
2097,142194,6971,40181,7842,0,N,N,N,CP_Phys,TT_Task,DT_FixedDrtn,TK_NotStart,CZA-TK-0735-1489,Welding,8380,1692,0,60,0,184.144819,184.144819,60,180,0,180,,,,2015-02-16 15:00,2015-02-23 15:00,,2014-08-03 13:00,2014-08-10 13:00,2014-08-03 13:00,2014-08-10 13:00,2014-08-03 13:00,2014-08-10 13:00,2015-02-16 15:00,2015-02-23 15:00,,PT_Normal,,,,,vaFuPVccSEGT4/QWNvIlOg,eKGv0XnockSTNv1f5yogOg,,,N,0,0,,,2014-04-13 07:21,2014-04-14 16:04,admin,admin,
2098,142195,6971,40181,7842,0,N,N,N,CP_Phys,TT_Task,DT_FixedDrtn,TK_NotStart,CZA-TK-0735-1490,Inspection,8380,1692,0,80,0,36.828964,36.828964,80,0,0,0,,,,2015-02-14 15:00,2015-02-23 15:00,,2014-07-31 13:00,2014-08-10 13:00,2014-07-31 13:00,2014-08-10 13:00,2014-07-31 13:00,2014-08-10 13:00,2015-02-14 15:00,2015-02-23 15:00,,PT_Normal,,,,,nR6Cgz3FnEaI1ioUI7KKcQ,oFHmcWhrY0uquhF3sQeSQg,,,N,0,0,,,2014-04-13 07:21,2014-04-14 16:04,admin,admin,
2099,142196,6971,40141,7842,0,N,N,N,CP_Phys,TT_Task,DT_FixedDrtn,TK_NotStart,CZA-TK-0735-1494,"Jacking,Erection and Fit-up",8380,1692,0,20,0,195.728011,195.728011,20,60,0,60,,,,2015-03-04 15:00,2015-03-07 15:00,,2014-08-19 13:00,2014-08-21 13:00,2014-08-19 13:00,2014-08-21 13:00,2014-08-19 13:00,2014-08-21 13:00,2015-03-04 15:00,2015-03-07 15:00,,PT_Normal,,,,,v9eTsmiv/k+8fkbDYR1+vQ,X5+KendvNEi/fDEoEVc/gQ,,,N,0,0,,,2014-04-13 07:21,2014-04-14 16:04,admin,admin,
2100,142197,6971,40141,7842,0,N,N,N,CP_Phys,TT_Task,DT_FixedDrtn,TK_NotStart,CZA-TK-0735-1495,Welding,8380,1692,0,60,0,244.660014,244.660014,60,180,0,180,,,,2015-03-07 15:00,2015-03-14 15:00,,2014-08-21 13:00,2014-08-28 13:00,2014-08-21 13:00,2014-08-28 13:00,2014-08-21 13:00,2014-08-28 13:00,2015-03-07 15:00,2015-03-14 15:00,,PT_Normal,,,,,PrA2ZlspmkCmtoCz7p/R9w,7TgZc2nVjUSPEk63gdMvGA,,,N,0,0,,,2014-04-13 07:21,2014-04-14 16:04,admin,admin,
2101,142198,6971,40141,7842,0,N,N,N,CP_Phys,TT_Task,DT_FixedDrtn,TK_NotStart,CZA-TK-0735-1496,Inspection,8380,1692,0,80,0,48.932003,48.932003,80,0,0,0,,,,2015-03-04 15:00,2015-03-14 15:00,,2014-08-19 13:00,2014-08-28 13:00,2014-08-19 13:00,2014-08-28 13:00,2014-08-19 13:00,2014-08-28 13:00,2015-03-04 15:00,2015-03-14 15:00,,PT_Normal,,,,,dSEMYnIDb0uKzMyzll87Dg,0nGcYD9FpUC/Jh3SDZpQuQ,,,N,0,0,,,2014-04-13 07:21,2014-04-14 16:04,admin,admin,
2102,142199,6971,40232,7842,0,N,N,N,CP_Phys,TT_Task,DT_FixedDrtn,TK_NotStart,CZA-TK-0735-1497,"Jacking, Erection and Fit-up",8380,1692,0,20,0,195.728011,195.728011,20,60,0,60,,,,2015-03-14 15:00,2015-03-16 15:00,,2014-08-28 13:00,2014-08-31 13:00,2014-08-28 13:00,2014-08-31 13:00,2014-08-28 13:00,2014-08-31 13:00,2015-03-14 15:00,2015-03-16 15:00,,PT_Normal,,,,,smP4Cl/mwUat9aCMNjYmXg,VutqC/9ieUC81Yvia9lUig,,,N,0,0,,,2014-04-13 07:21,2014-04-14 16:04,admin,admin,
2103,142200,6971,40232,7842,0,N,N,N,CP_Phys,TT_Task,DT_FixedDrtn,TK_NotStart,CZA-TK-0735-1498,Welding,8380,1692,0,60,0,244.660014,244.660014,60,180,0,180,,,,2015-03-16 15:00,2015-03-23 15:00,,2014-08-31 13:00,2014-09-07 13:00,2014-08-31 13:00,2014-09-07 13:00,2014-08-31 13:00,2014-09-07 13:00,2015-03-16 15:00,2015-03-23 15:00,,PT_Normal,,,,,UTTdKEIDhEWUrNv985GX/Q,Aw94RTKH30uuIaDnn0cVfQ,,,N,0,0,,,2014-04-13 07:21,2014-04-14 16:04,admin,admin,
2104,142201,6971,40232,7842,0,N,N,N,CP_Phys,TT_Task,DT_FixedDrtn,TK_NotStart,CZA-TK-0735-1499,Inspection,8380,1692,0,80,0,48.932003,48.932003,80,0,0,0,,,,2015-03-14 15:00,2015-03-23 15:00,,2014-08-28 13:00,2014-09-07 13:00,2014-08-28 13:00,2014-09-07 13:00,2014-08-28 13:00,2014-09-07 13:00,2015-03-14 15:00,2015-03-23 15:00,,PT_Normal,,,,,Dt83HeKwTE6UaYsVoIHcSw,APPJZI0F702iDXmHRzaWyg,,,N,0,0,,,2014-04-13 07:21,2014-04-14 16:04,admin,admin,
2105,142202,6971,40274,7842,0,N,N,N,CP_Phys,TT_Task,DT_FixedDrtn,TK_NotStart,CZA-TK-0735-1509,Erection and Fit-up,8380,1692,0,20,0,0,0,20,60,0,60,,,,2015-04-19 15:00,2015-04-21 15:00,,2014-10-04 13:00,2014-10-06 13:00,2014-10-04 13:00,2014-10-06 13:00,2014-10-04 13:00,2014-10-06 13:00,2015-04-19 15:00,2015-04-21 15:00,,PT_Normal,,,,,X6OznZIiu0iZMTE05KszYg,V9YZQs5HXkCl9zrzOhr2mw,,,N,0,0,,,2014-04-13 07:21,2014-04-14 16:04,admin,admin,
2106,142203,6971,40274,7842,0,N,N,N,CP_Phys,TT_Task,DT_FixedDrtn,TK_NotStart,CZA-TK-0735-1510,Welding,8380,1692,0,50,0,0,0,50,150,0,150,,,,2015-04-21 15:00,2015-04-27 15:00,,2014-10-06 13:00,2014-10-12 13:00,2014-10-06 13:00,2014-10-12 13:00,2014-10-06 13:00,2014-10-12 13:00,2015-04-21 15:00,2015-04-27 15:00,,PT_Normal,,,,,XACueXxP1kCTDstlf9giTg,q79puxXPTEai8nNiPGHxsg,,,N,0,0,,,2014-04-13 07:21,2014-04-14 16:04,admin,admin,
2107,142204,6971,40274,7842,0,N,N,N,CP_Phys,TT_Task,DT_FixedDrtn,TK_NotStart,CZA-TK-0735-1511,Inspection,8380,1692,0,70,0,0,0,70,0,0,0,,,,2015-04-19 15:00,2015-04-27 15:00,,2014-10-04 13:00,2014-10-12 13:00,2014-10-04 13:00,2014-10-12 13:00,2014-10-04 13:00,2014-10-12 13:00,2015-04-19 15:00,2015-04-27 15:00,,PT_Normal,,,,,XYomQGrWu0qA7SBigWob4g,7RqlBWTijUGw9XNkRUoEig,,,N,0,0,,,2014-04-13 07:21,2014-04-14 16:04,admin,admin,
2108,142205,6971,40334,7842,0,N,N,N,CP_Phys,TT_Task,DT_FixedDrtn,TK_NotStart,CZA-TK-0735-1503,"Jacking, Erection and Fit-up",8380,1692,0,20,0,293.382607,293.382607,20,60,0,60,,,,2015-04-01 15:00,2015-04-04 15:00,,2014-09-16 13:00,2014-09-18 13:00,2014-09-16 13:00,2014-09-18 13:00,2014-09-16 13:00,2014-09-18 13:00,2015-04-01 15:00,2015-04-04 15:00,,PT_Normal,,,,,SpGlvDgB5kCt6ffPlqLvXw,G6LzG30MpEOAjf5P/Jgorw,,,N,0,0,,,2014-04-13 07:21,2014-04-14 16:04,admin,admin,
2109,142206,6971,40334,7842,0,N,N,N,CP_Phys,TT_Task,DT_FixedDrtn,TK_NotStart,CZA-TK-0735-1504,Welding,8380,1692,0,60,0,366.728259,366.728259,60,180,0,180,,,,2015-04-04 15:00,2015-04-11 15:00,,2014-09-18 13:00,2014-09-25 13:00,2014-09-18 13:00,2014-09-25 13:00,2014-09-18 13:00,2014-09-25 13:00,2015-04-04 15:00,2015-04-11 15:00,,PT_Normal,,,,,o6fpKf/u9kWuXX3OutSogA,R71eKfqOfkW0sJHwvcUhpA,,,N,0,0,,,2014-04-13 07:21,2014-04-14 16:04,admin,admin,
2110,142207,6971,40334,7842,0,N,N,N,CP_Phys,TT_Task,DT_FixedDrtn,TK_NotStart,CZA-TK-0735-1505,Inspection,8380,1692,0,80,0,73.345652,73.345652,80,0,0,0,,,,2015-04-01 15:00,2015-04-11 15:00,,2014-09-16 13:00,2014-09-25 13:00,2014-09-16 13:00,2014-09-25 13:00,2014-09-16 13:00,2014-09-25 13:00,2015-04-01 15:00,2015-04-11 15:00,,PT_Normal,,,,,2jGt7RX73U6GPEgOcm7YtA,WsNrumyrqkCB5W6rF6newg,,,N,0,0,,,2014-04-13 07:21,2014-04-14 16:04,admin,admin,
2111,142208,6971,40226,7842,0,N,N,N,CP_Phys,TT_Task,DT_FixedDrtn,TK_NotStart,CZA-TK-0735-1452,Laying and Fit-up,8380,1692,0,30,0,211.908167,211.908167,30,90,0,90,,,,2014-10-12 15:00,2014-10-15 15:00,,2014-03-29 13:00,2014-04-01 13:00,2014-03-29 13:00,2014-04-01 13:00,2014-03-29 13:00,2014-04-01 13:00,2014-10-12 15:00,2014-10-15 15:00,,PT_Normal,,,,,zmETm/wXC0ibv99C0y7Mdg,ZxUCLhAFpUeax4343OlnDw,,,N,0,0,,,2014-04-13 07:21,2014-04-14 16:04,admin,admin,
2112,142209,6971,40226,7842,0,N,N,N,CP_Phys,TT_Task,DT_FixedDrtn,TK_NotStart,CZA-TK-0735-1453,Welding,8380,1692,0,120,0,264.885209,264.885209,120,360,0,360,,,,2014-10-15 15:00,2014-10-29 15:00,,2014-04-01 13:00,2014-04-15 13:00,2014-04-01 13:00,2014-04-15 13:00,2014-04-01 13:00,2014-04-15 13:00,2014-10-15 15:00,2014-10-29 15:00,,PT_Normal,,,,,ekSQ/XbXCUCNisPYO153jg,QtucmntDvEiyKt5WqdaNrw,,,N,0,0,,,2014-04-13 07:21,2014-04-14 16:04,admin,admin,
2113,142210,6971,40226,7842,0,N,N,N,CP_Phys,TT_Task,DT_FixedDrtn,TK_NotStart,CZA-TK-0735-1454,Inspection,8380,1692,0,150,0,52.977042,52.977042,150,0,0,0,,,,2014-10-12 15:00,2014-10-29 15:00,,2014-03-29 13:00,2014-04-15 13:00,2014-03-29 13:00,2014-04-15 13:00,2014-03-29 13:00,2014-04-15 13:00,2014-10-12 15:00,2014-10-29 15:00,,PT_Normal,,,,,uFHPvegaukGPGRhzYEZFgg,3qoqrn7cD0COqLf+rSdE2g,,,N,0,0,,,2014-04-13 07:21,2014-04-14 16:04,admin,admin,
2114,142211,6971,40227,7842,0,N,N,N,CP_Phys,TT_Task,DT_FixedDrtn,TK_NotStart,CZA-TK-0735-1506,"Lay-out, Cutting, and Fit-up",8380,1692,0,20,0,0,0,20,60,0,60,,,,2015-04-11 15:00,2015-04-13 15:00,,2014-09-25 13:00,2014-09-28 13:00,2014-09-25 13:00,2014-09-28 13:00,2014-09-25 13:00,2014-09-28 13:00,2015-04-11 15:00,2015-04-13 15:00,,PT_Normal,,,,,W52scxnerEm/xfedmubBOA,uKb+GWnIZkirRDrEsn+5Hw,,,N,0,0,,,2014-04-13 07:21,2014-04-14 16:04,admin,admin,
2115,142212,6971,40227,7842,0,N,N,N,CP_Phys,TT_Task,DT_FixedDrtn,TK_NotStart,CZA-TK-0735-1507,Welding,8380,1692,0,50,0,0,0,50,150,0,150,,,,2015-04-13 15:00,2015-04-19 15:00,,2014-09-28 13:00,2014-10-04 13:00,2014-09-28 13:00,2014-10-04 13:00,2014-09-28 13:00,2014-10-04 13:00,2015-04-13 15:00,2015-04-19 15:00,,PT_Normal,,,,,Ce+WVWV1XkqZSRM8G9zeoA,yXthoRpiGkycE7489B1y2A,,,N,0,0,,,2014-04-13 07:21,2014-04-14 16:04,admin,admin,
2116,142213,6971,40227,7842,0,N,N,N,CP_Phys,TT_Task,DT_FixedDrtn,TK_NotStart,CZA-TK-0735-1508,Inspection,8380,1692,0,70,0,0,0,70,0,0,0,,,,2015-04-11 15:00,2015-04-19 15:00,,2014-09-25 13:00,2014-10-04 13:00,2014-09-25 13:00,2014-10-04 13:00,2014-09-25 13:00,2014-10-04 13:00,2015-04-11 15:00,2015-04-19 15:00,,PT_Normal,,,,,Z7bz9+H5TkuVwSR0vGS/9g,dQsh56/hgEynth8JZI0xVg,,,N,0,0,,,2014-04-13 07:21,2014-04-14 16:04,admin,admin,
2117,142214,6971,40228,7842,0,N,N,N,CP_Phys,TT_Task,DT_FixedDrtn,TK_NotStart,CZA-TK-0735-1491,"Jacking,Erection and Fit-up",8380,1692,0,20,0,147.315855,147.315855,20,60,0,60,,,,2015-02-23 15:00,2015-02-25 15:00,,2014-08-10 13:00,2014-08-12 13:00,2014-08-10 13:00,2014-08-12 13:00,2014-08-10 13:00,2014-08-12 13:00,2015-02-23 15:00,2015-02-25 15:00,,PT_Normal,,,,,bBP9breuNEWHZ97J3993Bg,KEAqZjtzEU208BoS4GQooQ,,,N,0,0,,,2014-04-13 07:21,2014-04-14 16:04,admin,admin,
2118,142215,6971,40228,7842,0,N,N,N,CP_Phys,TT_Task,DT_FixedDrtn,TK_NotStart,CZA-TK-0735-1492,Welding,8380,1692,0,60,0,184.144819,184.144819,60,180,0,180,,,,2015-02-25 15:00,2015-03-04 15:00,,2014-08-12 13:00,2014-08-19 13:00,2014-08-12 13:00,2014-08-19 13:00,2014-08-12 13:00,2014-08-19 13:00,2015-02-25 15:00,2015-03-04 15:00,,PT_Normal,,,,,9ZhH5KBVG0W0v9jwpDR/1w,4P9eZKoLsEyOwLOKMHyIQA,,,N,0,0,,,2014-04-13 07:21,2014-04-14 16:04,admin,admin,
2119,142216,6971,40228,7842,0,N,N,N,CP_Phys,TT_Task,DT_FixedDrtn,TK_NotStart,CZA-TK-0735-1493,Inspection,8380,1692,0,80,0,36.828964,36.828964,80,0,0,0,,,,2015-02-23 15:00,2015-03-04 15:00,,2014-08-10 13:00,2014-08-19 13:00,2014-08-10 13:00,2014-08-19 13:00,2014-08-10 13:00,2014-08-19 13:00,2015-02-23 15:00,2015-03-04 15:00,,PT_Normal,,,,,rD5YjwrWcECs+eXRGzfSEw,DOWElWxxZESMzwo4kykrfg,,,N,0,0,,,2014-04-13 07:21,2014-04-14 16:04,admin,admin,
2120,142217,6971,40229,7842,0,N,N,N,CP_Phys,TT_Task,DT_FixedDrtn,TK_NotStart,CZA-TK-0735-1470,"Laying, Cutting all Holes and Fit-up",8380,1692,0,30,0,402.902957,402.902957,30,60,0,60,,,,2014-12-11 15:00,2014-12-15 15:00,,2014-05-28 13:00,2014-06-01 13:00,2014-05-28 13:00,2014-06-01 13:00,2014-05-28 13:00,2014-06-01 13:00,2014-12-11 15:00,2014-12-15 15:00,,PT_Normal,,,,,3xHqfp2jJUKubc4AxBcW3A,IoqBYoY/r0qpis3uaHA2rg,,,N,0,0,,,2014-04-13 07:21,2014-04-14 16:04,admin,admin,
2121,142218,6971,40229,7842,0,N,N,N,CP_Phys,TT_Task,DT_FixedDrtn,TK_NotStart,CZA-TK-0735-1471,Welding,8380,1722,30,80,0,503.628696,503.628696,80,240,0,240,,,,2014-12-15 15:00,2014-12-24 15:00,,2014-05-28 13:00,2014-06-07 13:00,2014-05-28 13:00,2014-06-07 13:00,2014-05-28 13:00,2014-06-07 13:00,2014-12-15 15:00,2014-12-24 15:00,,PT_Normal,,,,,E9grae7rB0K4iJdjNKhbtw,wmTaeVHNF0itAfyykPyp/w,,,N,0,0,,,2014-04-13 07:21,2014-04-14 16:04,admin,admin,
2122,142219,6971,40229,7842,0,N,N,N,CP_Phys,TT_Task,DT_FixedDrtn,TK_NotStart,CZA-TK-0735-1472,Inspection,8380,1692,0,110,0,100.725739,100.725739,110,0,0,0,,,,2014-12-11 15:00,2014-12-24 15:00,,2014-05-28 13:00,2014-06-10 13:00,2014-05-28 13:00,2014-06-10 13:00,2014-05-28 13:00,2014-06-10 13:00,2014-12-11 15:00,2014-12-24 15:00,,PT_Normal,,,,,CxMfMV/xZ0K8kHdzeSYdsg,9Ax86evXdkqmG3oXkNRO6g,,,N,0,0,,,2014-04-13 07:21,2014-04-14 16:04,admin,admin,
2123,142220,6971,40230,7842,0,N,N,N,CP_Phys,TT_Task,DT_FixedDrtn,TK_NotStart,CZA-TK-0735-1449,Laying and Fit-up,8380,1692,0,10,0,211.908167,211.908167,10,30,0,30,,,,2014-10-07 15:00,2014-10-08 15:00,,2014-03-24 13:00,2014-03-25 13:00,2014-03-24 13:00,2014-03-25 13:00,2014-03-24 13:00,2014-03-25 13:00,2014-10-07 15:00,2014-10-08 15:00,,PT_Normal,,,,,DiunMQthw02iRGhpYPiL0A,nG5dbLI1O0ixQzW2BmJFVg,,,N,0,0,,,2014-04-13 07:21,2014-04-14 16:04,admin,admin,
2124,142221,6971,40230,7842,0,N,N,N,CP_Phys,TT_Task,DT_FixedDrtn,TK_NotStart,CZA-TK-0735-1450,Welding,8380,1692,0,30,0,264.885209,264.885209,30,90,0,90,,,,2014-10-08 15:00,2014-10-12 15:00,,2014-03-25 13:00,2014-03-29 13:00,2014-03-25 13:00,2014-03-29 13:00,2014-03-25 13:00,2014-03-29 13:00,2014-10-08 15:00,2014-10-12 15:00,,PT_Normal,,,,,xM3tdW8NaEuBPsMrftKcHw,nPYXfRXvG0SjCvGki3a/iA,,,N,0,0,,,2014-04-13 07:21,2014-04-14 16:04,admin,admin,
2125,142222,6971,40230,7842,0,N,N,N,CP_Phys,TT_Task,DT_FixedDrtn,TK_NotStart,CZA-TK-0735-1451,Inspection,8380,1692,0,40,0,52.977042,52.977042,40,0,0,0,,,,2014-10-07 15:00,2014-10-12 15:00,,2014-03-24 13:00,2014-03-29 13:00,2014-03-24 13:00,2014-03-29 13:00,2014-03-24 13:00,2014-03-29 13:00,2014-10-07 15:00,2014-10-12 15:00,,PT_Normal,,,,,sn4w44KgDUmOZ4C9v4EXIw,3EX6lkZCN0Kz4+MYsktwLA,,,N,0,0,,,2014-04-13 07:21,2014-04-14 16:04,admin,admin,
2126,142223,6971,40172,7842,0,N,N,N,CP_Phys,TT_Task,DT_FixedDrtn,TK_NotStart,CZA-TK-0735-1512,Installation of Primary and Secondary Seal,8380,1692,0,40,0,0,0,40,120,0,120,,,,2015-04-27 15:00,2015-05-02 15:00,,2014-10-12 13:00,2014-10-16 13:00,2014-10-12 13:00,2014-10-16 13:00,2014-10-12 13:00,2014-10-16 13:00,2015-04-27 15:00,2015-05-02 15:00,,PT_Normal,,,,,iH2ImCvS3USbCKzWuxKKqg,ZYZj09gM6EGUpqVS7Sqgrg,,,N,0,0,,,2014-04-13 07:21,2014-04-14 16:04,admin,admin,
2127,142224,6971,40172,7842,0,N,N,N,CP_Phys,TT_Task,DT_FixedDrtn,TK_NotStart,CZA-TK-0735-1513,Inspection,8380,1692,0,10,0,0,0,10,0,0,0,,,,2015-05-02 15:00,2015-05-03 15:00,,2014-10-16 13:00,2014-10-18 13:00,2014-10-16 13:00,2014-10-18 13:00,2014-10-16 13:00,2014-10-18 13:00,2015-05-02 15:00,2015-05-03 15:00,,PT_Normal,,,,,r2o/DupM/U66Uvu/mqmBVA,PB5Eoyqw2kqTOgMiOv1iZQ,,,N,0,0,,,2014-04-13 07:21,2014-04-14 16:04,admin,admin,
2128,142225,6971,40341,7842,0,N,N,N,CP_Phys,TT_Task,DT_FixedDrtn,TK_NotStart,CZA-TK-0735-1500,"Jacking, Erection and Fit-up",8380,1692,0,20,0,293.382607,293.382607,20,60,0,60,,,,2015-03-23 15:00,2015-03-25 15:00,,2014-09-07 13:00,2014-09-09 13:00,2014-09-07 13:00,2014-09-09 13:00,2014-09-07 13:00,2014-09-09 13:00,2015-03-23 15:00,2015-03-25 15:00,,PT_Normal,,,,,DFQD0cKoT0uF6o59r/v5TQ,2l5KyIPQsECVxZRytmrnMw,,,N,0,0,,,2014-04-13 07:21,2014-04-14 16:04,admin,admin,
2129,142226,6971,40341,7842,0,N,N,N,CP_Phys,TT_Task,DT_FixedDrtn,TK_NotStart,CZA-TK-0735-1501,Welding,8380,1692,0,60,0,366.728259,366.728259,60,180,0,180,,,,2015-03-25 15:00,2015-04-01 15:00,,2014-09-09 13:00,2014-09-16 13:00,2014-09-09 13:00,2014-09-16 13:00,2014-09-09 13:00,2014-09-16 13:00,2015-03-25 15:00,2015-04-01 15:00,,PT_Normal,,,,,GES/P+iydEeFK48dG6s3KQ,iRHoGC8M5U6ecmpqlek3cA,,,N,0,0,,,2014-04-13 07:21,2014-04-14 16:04,admin,admin,
2130,142227,6971,40341,7842,0,N,N,N,CP_Phys,TT_Task,DT_FixedDrtn,TK_NotStart,CZA-TK-0735-1502,Inspection,8380,1692,0,80,0,73.345652,73.345652,80,0,0,0,,,,2015-03-23 15:00,2015-04-01 15:00,,2014-09-07 13:00,2014-09-16 13:00,2014-09-07 13:00,2014-09-16 13:00,2014-09-07 13:00,2014-09-16 13:00,2015-03-23 15:00,2015-04-01 15:00,,PT_Normal,,,,,EN0B23ugZ0u5tW1PGzw8vQ,a/kDVrlzik6+xMKahUEY6w,,,N,0,0,,,2014-04-13 07:21,2014-04-14 16:04,admin,admin,
2131,142228,6971,40342,7842,0,N,N,N,CP_Phys,TT_Task,DT_FixedDrtn,TK_NotStart,CZA-TK-0735-1476,Laying and Fit-up,8380,1692,0,40,0,410.756637,410.756637,40,120,0,120,,,,2014-12-31 15:00,2015-01-05 15:00,,2014-06-17 13:00,2014-06-22 13:00,2014-06-17 13:00,2014-06-22 13:00,2014-06-17 13:00,2014-06-22 13:00,2014-12-31 15:00,2015-01-05 15:00,,PT_Normal,,,,,d+JW2ixA0EGZ7v0YYo1wzA,WF0GKzglekKoLLq7IMqnbg,,,N,0,0,,,2014-04-13 07:21,2014-04-14 16:04,admin,admin,
2132,142229,6971,40342,7842,0,N,N,N,CP_Phys,TT_Task,DT_FixedDrtn,TK_NotStart,CZA-TK-0735-1477,Welding,8380,1692,0,80,0,513.445796,513.445796,80,240,0,240,,,,2015-01-05 15:00,2015-01-14 15:00,,2014-06-22 13:00,2014-07-01 13:00,2014-06-22 13:00,2014-07-01 13:00,2014-06-22 13:00,2014-07-01 13:00,2015-01-05 15:00,2015-01-14 15:00,,PT_Normal,,,,,yA3u6j5N/UWhc76QoUiPMQ,aQ0Zo3R4/EChkLqkqsOAog,,,N,0,0,,,2014-04-13 07:21,2014-04-14 16:04,admin,admin,
2133,142230,6971,40342,7842,0,N,N,N,CP_Phys,TT_Task,DT_FixedDrtn,TK_NotStart,CZA-TK-0735-1478,Inspection,8380,1692,0,120,0,102.689159,102.689159,120,0,0,0,,,,2014-12-31 15:00,2015-01-14 15:00,,2014-06-17 13:00,2014-07-01 13:00,2014-06-17 13:00,2014-07-01 13:00,2014-06-17 13:00,2014-07-01 13:00,2014-12-31 15:00,2015-01-14 15:00,,PT_Normal,,,,,RvnmG+EVQ0yrKBExJArcFQ,8VRZ+x0/qEuq6xhlUxSvdQ,,,N,0,0,,,2014-04-13 07:21,2014-04-14 16:04,admin,admin,
2134,142231,6971,40343,7842,0,N,N,N,CP_Phys,TT_Task,DT_FixedDrtn,TK_NotStart,CZA-TK-0735-1473,Erection and Fit-up,8380,1692,0,30,0,372.374733,372.374733,30,90,0,90,,,,2014-12-24 15:00,2014-12-28 15:00,,2014-06-10 13:00,2014-06-14 13:00,2014-06-10 13:00,2014-06-14 13:00,2014-06-10 13:00,2014-06-14 13:00,2014-12-24 15:00,2014-12-28 15:00,,PT_Normal,,,,,KiqmUKBfD02SMC9u8RNn2g,Gtnt5poe4kOvEE9kRD+dPg,,,N,0,0,,,2014-04-13 07:21,2014-04-14 16:04,admin,admin,
2135,142232,6971,40343,7842,0,N,N,N,CP_Phys,TT_Task,DT_FixedDrtn,TK_NotStart,CZA-TK-0735-1474,Welding,8380,1692,0,30,0,465.468416,465.468416,30,90,0,90,,,,2014-12-28 15:00,2014-12-31 15:00,,2014-06-14 13:00,2014-06-17 13:00,2014-06-14 13:00,2014-06-17 13:00,2014-06-14 13:00,2014-06-17 13:00,2014-12-28 15:00,2014-12-31 15:00,,PT_Normal,,,,,MzgjWMFRxkCh9asybhqSRg,jNixevfb5kKb0kIcs4cwww,,,N,0,0,,,2014-04-13 07:21,2014-04-14 16:04,admin,admin,
2136,142233,6971,40343,7842,0,N,N,N,CP_Phys,TT_Task,DT_FixedDrtn,TK_NotStart,CZA-TK-0735-1475,Inspection,8380,1692,0,60,0,93.093683,93.093683,60,0,0,0,,,,2014-12-24 15:00,2014-12-31 15:00,,2014-06-10 13:00,2014-06-17 13:00,2014-06-10 13:00,2014-06-17 13:00,2014-06-10 13:00,2014-06-17 13:00,2014-12-24 15:00,2014-12-31 15:00,,PT_Normal,,,,,x0NLVWHzVEuEVdUW44GyXA,FtnswzIf6UWW1gs48EEbRg,,,N,0,0,,,2014-04-13 07:21,2014-04-14 16:04,admin,admin,
2137,142234,6971,40235,7842,0,N,N,N,CP_Phys,TT_Task,DT_FixedDrtn,TK_NotStart,CZA-TK-0735-1455,Erection and Fit-up,8380,1692,0,20,0,135.375504,135.375504,20,60,0,60,,,,2014-10-29 15:00,2014-11-01 15:00,,2014-04-15 13:00,2014-04-17 13:00,2014-04-15 13:00,2014-04-17 13:00,2014-04-15 13:00,2014-04-17 13:00,2014-10-29 15:00,2014-11-01 15:00,,PT_Normal,,,,,tAF81N0FNUaPOtCt30/Aow,ep6edDvv2kin9GRG73FSVw,,,N,0,0,,,2014-04-13 07:21,2014-04-14 16:04,admin,admin,
2138,142235,6971,40235,7842,0,N,N,N,CP_Phys,TT_Task,DT_FixedDrtn,TK_NotStart,CZA-TK-0735-1456,Welding,8380,1692,0,60,0,169.21938,169.21938,60,180,0,180,,,,2014-11-01 15:00,2014-11-08 15:00,,2014-04-17 13:00,2014-04-24 13:00,2014-04-17 13:00,2014-04-24 13:00,2014-04-17 13:00,2014-04-24 13:00,2014-11-01 15:00,2014-11-08 15:00,,PT_Normal,,,,,U7N5zYwoMkShHrwHI9hh0Q,U56gYb400k2Ap5aG3TA0Mg,,,N,0,0,,,2014-04-13 07:21,2014-04-14 16:04,admin,admin,
2139,142236,6971,40235,7842,0,N,N,N,CP_Phys,TT_Task,DT_FixedDrtn,TK_NotStart,CZA-TK-0735-1457,Inspection,8380,1692,0,80,0,33.843876,33.843876,80,0,0,0,,,,2014-10-29 15:00,2014-11-08 15:00,,2014-04-15 13:00,2014-04-24 13:00,2014-04-15 13:00,2014-04-24 13:00,2014-04-15 13:00,2014-04-24 13:00,2014-10-29 15:00,2014-11-08 15:00,,PT_Normal,,,,,oYA4zWF640CzHU67WtE5NQ,1NiIxwLIqkCMF1FsSlsN7Q,,,N,0,0,,,2014-04-13 07:21,2014-04-14 16:04,admin,admin,
2140,142237,6971,40445,7842,0,N,N,N,CP_Phys,TT_Task,DT_FixedDrtn,TK_NotStart,CZA-TK-0735-1467,Laying and Fit-up,8380,1692,0,20,0,272.015739,272.015739,20,60,0,60,,,,2014-11-30 15:00,2014-12-02 15:00,,2014-05-17 13:00,2014-05-19 13:00,2014-05-17 13:00,2014-05-19 13:00,2014-05-17 13:00,2014-05-19 13:00,2014-11-30 15:00,2014-12-02 15:00,,PT_Normal,,,,,+1oORj+kkkiBLXGlc7mmAg,EROWul20F0+mZn9Lr2U3oA,,,N,0,0,,,2014-04-13 07:21,2014-04-14 16:04,admin,admin,
2141,142238,6971,40445,7842,0,N,N,N,CP_Phys,TT_Task,DT_FixedDrtn,TK_NotStart,CZA-TK-0735-1468,Welding,8380,1692,0,80,0,340.019674,340.019674,80,240,0,240,,,,2014-12-02 15:00,2014-12-11 15:00,,2014-05-19 13:00,2014-05-28 13:00,2014-05-19 13:00,2014-05-28 13:00,2014-05-19 13:00,2014-05-28 13:00,2014-12-02 15:00,2014-12-11 15:00,,PT_Normal,,,,,Xe4wdUHJyEWwpfotsNpEeg,NWdoEBk9pUyVZeGn8XDCMg,,,N,0,0,,,2014-04-13 07:21,2014-04-14 16:04,admin,admin,
2142,142239,6971,40445,7842,0,N,N,N,CP_Phys,TT_Task,DT_FixedDrtn,TK_NotStart,CZA-TK-0735-1469,Inspection,8380,1692,0,100,0,68.003935,68.003935,100,0,0,0,,,,2014-11-30 15:00,2014-12-11 15:00,,2014-05-17 13:00,2014-05-28 13:00,2014-05-17 13:00,2014-05-28 13:00,2014-05-17 13:00,2014-05-28 13:00,2014-11-30 15:00,2014-12-11 15:00,,PT_Normal,,,,,93nPAooo3kqDTHaNxejXIQ,7+ruqHHQn0G1Ac6+IFb2nQ,,,N,0,0,,,2014-04-13 07:21,2014-04-14 16:04,admin,admin,
2143,142240,6971,40446,7842,0,N,N,N,CP_Phys,TT_Task,DT_FixedDrtn,TK_NotStart,CZA-TK-0735-1479,Laying and Fit-up,8380,1692,0,20,0,0,0,20,60,0,60,,,,2015-01-14 15:00,2015-01-17 15:00,,2014-07-01 13:00,2014-07-03 13:00,2014-07-01 13:00,2014-07-03 13:00,2014-07-01 13:00,2014-07-03 13:00,2015-01-14 15:00,2015-01-17 15:00,,PT_Normal,,,,,2gmvCwVEm0i9eQdTDNSH9w,hbCYEUsPdUeA7GWLWFbmgw,,,N,0,0,,,2014-04-13 07:21,2014-04-14 16:04,admin,admin,
2144,142241,6971,40446,7842,0,N,N,N,CP_Phys,TT_Task,DT_FixedDrtn,TK_NotStart,CZA-TK-0735-1480,Welding,8380,1692,0,50,0,0,0,50,150,0,150,,,,2015-01-17 15:00,2015-01-22 15:00,,2014-07-03 13:00,2014-07-09 13:00,2014-07-03 13:00,2014-07-09 13:00,2014-07-03 13:00,2014-07-09 13:00,2015-01-17 15:00,2015-01-22 15:00,,PT_Normal,,,,,OJvnTFIGK0mekSdFr7/4kg,TGMFoqVrjUCedRPQfGikQg,,,N,0,0,,,2014-04-13 07:21,2014-04-14 16:04,admin,admin,
2145,142242,6971,40446,7842,0,N,N,N,CP_Phys,TT_Task,DT_FixedDrtn,TK_NotStart,CZA-TK-0735-1481,Inspection,8380,1692,0,70,0,0,0,70,0,0,0,,,,2015-01-14 15:00,2015-01-22 15:00,,2014-07-01 13:00,2014-07-09 13:00,2014-07-01 13:00,2014-07-09 13:00,2014-07-01 13:00,2014-07-09 13:00,2015-01-14 15:00,2015-01-22 15:00,,PT_Normal,,,,,IncC0/clKEKubqdYoPQKUg,aK7lBiGEzEyJFnxf68a45Q,,,N,0,0,,,2014-04-13 07:21,2014-04-14 16:04,admin,admin,
2146,142243,6971,40447,7842,0,N,N,N,CP_Phys,TT_Task,DT_FixedDrtn,TK_NotStart,CZA-TK-0735-1458,Erection and Fit-up,8380,1692,0,20,0,132.555534,132.555534,20,60,0,60,,,,2014-11-08 15:00,2014-11-10 15:00,,2014-04-24 13:00,2014-04-27 13:00,2014-04-24 13:00,2014-04-27 13:00,2014-04-24 13:00,2014-04-27 13:00,2014-11-08 15:00,2014-11-10 15:00,,PT_Normal,,,,,EUL8EFF4Zkmv82hMlcLJKg,mTnhy87JgkqRfhfvVZCrMw,,,N,0,0,,,2014-04-13 07:21,2014-04-14 16:04,admin,admin,
2147,142244,6971,40447,7842,0,N,N,N,CP_Phys,TT_Task,DT_FixedDrtn,TK_NotStart,CZA-TK-0735-1460,Inspection,8380,1692,0,80,0,33.138883,33.138883,80,0,0,0,,,,2014-11-08 15:00,2014-11-17 15:00,,2014-04-24 13:00,2014-05-04 13:00,2014-04-24 13:00,2014-05-04 13:00,2014-04-24 13:00,2014-05-04 13:00,2014-11-08 15:00,2014-11-17 15:00,,PT_Normal,,,,,cU6VwtcxfU69CXxG6ZsA0g,NgWrfY8iGUaZEW8l6EbbsA,,,N,0,0,,,2014-04-13 07:21,2014-04-14 16:04,admin,admin,
2148,142245,6971,40447,7842,0,N,N,N,CP_Phys,TT_Task,DT_FixedDrtn,TK_NotStart,CZA-TK-0735-1459,Welding,8380,1692,0,60,0,165.694417,165.694417,60,180,0,180,,,,2014-11-10 15:00,2014-11-17 15:00,,2014-04-27 13:00,2014-05-04 13:00,2014-04-27 13:00,2014-05-04 13:00,2014-04-27 13:00,2014-05-04 13:00,2014-11-10 15:00,2014-11-17 15:00,,PT_Normal,,,,,CatNftkOQ0yjTKuXu23QHA,gNkaKgKMjk+I1lg4zk/3tQ,,,N,0,0,,,2014-04-13 07:21,2014-04-14 16:04,admin,admin,
2149,142246,6971,40448,7842,0,N,N,N,CP_Phys,TT_Task,DT_FixedDrtn,TK_NotStart,CZA-TK-0735-1461,"Cutting, Installation and Fit-up",8380,1692,0,20,0,0,0,20,60,0,60,,,,2014-11-17 15:00,2014-11-19 15:00,,2014-05-04 13:00,2014-05-06 13:00,2014-05-04 13:00,2014-05-06 13:00,2014-05-04 13:00,2014-05-06 13:00,2014-11-17 15:00,2014-11-19 15:00,,PT_Normal,,,,,MMMIJoRY40+rmNWW4uSreg,TusGaWy6gUS+fsx5GV/z2w,,,N,0,0,,,2014-04-13 07:21,2014-04-14 16:04,admin,admin,
2150,142247,6971,40448,7842,0,N,N,N,CP_Phys,TT_Task,DT_FixedDrtn,TK_NotStart,CZA-TK-0735-1462,Welding,8380,1692,0,30,0,0,0,30,90,0,90,,,,2014-11-19 15:00,2014-11-23 15:00,,2014-05-06 13:00,2014-05-10 13:00,2014-05-06 13:00,2014-05-10 13:00,2014-05-06 13:00,2014-05-10 13:00,2014-11-19 15:00,2014-11-23 15:00,,PT_Normal,,,,,+0MjsP2XQ0evAEF7YS/lyQ,50HzQdHa2U+rSALaPYXHUA,,,N,0,0,,,2014-04-13 07:21,2014-04-14 16:04,admin,admin,
2151,142248,6971,40448,7842,0,N,N,N,CP_Phys,TT_Task,DT_FixedDrtn,TK_NotStart,CZA-TK-0735-1463,Inspection,8380,1692,0,50,0,0,0,50,0,0,0,,,,2014-11-17 15:00,2014-11-23 15:00,,2014-05-04 13:00,2014-05-10 13:00,2014-05-04 13:00,2014-05-10 13:00,2014-05-04 13:00,2014-05-10 13:00,2014-11-17 15:00,2014-11-23 15:00,,PT_Normal,,,,,hrlw2cH33k+HCYswl7RvQw,EcVzEYt1pUSRg87Biu2x9A,,,N,0,0,,,2014-04-13 07:21,2014-04-14 16:04,admin,admin,
2152,142249,6971,40449,7842,0,N,N,N,CP_Phys,TT_Task,DT_FixedDrtn,TK_NotStart,CZA-TK-0735-1464,Erection and Fit-up,8380,1692,0,20,0,0,0,20,60,0,60,,,,2014-11-23 15:00,2014-11-25 15:00,,2014-05-10 13:00,2014-05-12 13:00,2014-05-10 13:00,2014-05-12 13:00,2014-05-10 13:00,2014-05-12 13:00,2014-11-23 15:00,2014-11-25 15:00,,PT_Normal,,,,,OsmWDK2U/0K+dvK3v7b9AA,bcs9fEhXDk+rwAEvpryxKQ,,,N,0,0,,,2014-04-13 07:21,2014-04-14 16:04,admin,admin,
2153,142250,6971,40449,7842,0,N,N,N,CP_Phys,TT_Task,DT_FixedDrtn,TK_NotStart,CZA-TK-0735-1465,Welding,8380,1692,0,40,0,0,0,40,120,0,120,,,,2014-11-25 15:00,2014-11-30 15:00,,2014-05-12 13:00,2014-05-17 13:00,2014-05-12 13:00,2014-05-17 13:00,2014-05-12 13:00,2014-05-17 13:00,2014-11-25 15:00,2014-11-30 15:00,,PT_Normal,,,,,3eDnGg1MhE+DRZWMKTRDWA,QHhgplcWFkupkFY8QHicOQ,,,N,0,0,,,2014-04-13 07:21,2014-04-14 16:04,admin,admin,
2154,142251,6971,40449,7842,0,N,N,N,CP_Phys,TT_Task,DT_FixedDrtn,TK_NotStart,CZA-TK-0735-1466,Inspection,8380,1692,0,60,0,0,0,60,0,0,0,,,,2014-11-23 15:00,2014-11-30 15:00,,2014-05-10 13:00,2014-05-17 13:00,2014-05-10 13:00,2014-05-17 13:00,2014-05-10 13:00,2014-05-17 13:00,2014-11-23 15:00,2014-11-30 15:00,,PT_Normal,,,,,IagcCuH8dUC/fJTuAHKuZg,Vrn6wT8weUm7MvBZwA8Vow,,,N,0,0,,,2014-04-13 07:21,2014-04-14 16:04,admin,admin,
2155,142252,6971,40050,7842,0,N,N,N,CP_Phys,TT_Task,DT_FixedDrtn,TK_NotStart,CZA-TK-0735-1514,"Filling, Holding and Draining of Water",8380,1692,0,220,0,5332.096855,5332.096855,220,0,0,0,,,,2015-05-03 15:00,2015-05-28 15:00,,2014-10-18 13:00,2014-11-12 13:00,2014-10-18 13:00,2014-11-12 13:00,2014-10-18 13:00,2014-11-12 13:00,2015-05-03 15:00,2015-05-28 15:00,,PT_Normal,,,,,4fQLvQfJ5EmsXcyPPEqftQ,/SVjZW7PWEm1ShZv2SJ+gw,,,N,0,0,,,2014-04-13 07:21,2014-04-14 16:04,admin,admin,
2156,142253,6971,39935,7842,0,N,N,N,CP_Phys,TT_Task,DT_FixedDrtn,TK_NotStart,CZA-TK-0735-1516,Tank Calibration,8380,1692,0,50,0,1066.419371,1066.419371,50,0,0,0,,,,2015-06-20 15:00,2015-06-25 15:00,,2014-12-04 13:00,2014-12-10 13:00,2014-12-04 13:00,2014-12-10 13:00,2014-12-04 13:00,2014-12-10 13:00,2015-06-20 15:00,2015-06-25 15:00,,PT_Normal,,,,,zyU2/v9l80amhvu61TFGog,/Hzt9RmNwEC9rZ3tonG2Pw,,,N,0,0,,,2014-04-13 07:21,2014-04-14 16:04,admin,admin,
2157,142254,6971,39935,7842,0,N,N,N,CP_Phys,TT_Task,DT_FixedDrtn,TK_NotStart,CZA-TK-0735-1517,Tank Handover,8380,1692,860,20,0,1066.419371,1066.419371,20,0,0,0,,,,2015-06-25 15:00,2015-06-28 15:00,,2014-12-10 13:00,2014-12-13 13:00,2014-12-10 13:00,2014-12-13 13:00,2014-12-10 13:00,2014-12-13 13:00,2015-06-25 15:00,2015-06-28 15:00,,PT_Normal,,,,,3By2cZf0c0eWN9SPxpcU0Q,PhoEsEGUhEuvvQTjtNMxFw,,,N,0,0,,,2014-04-13 07:21,2014-04-14 16:04,admin,admin,
2158,142255,6971,39966,7842,0,N,N,N,CP_Phys,TT_Task,DT_FixedDrtn,TK_NotStart,CZA-TK-0735-1515,"Blasting and Painting Inside, Outside and Bottom Plates",8380,1692,0,190,0,3199.258113,3199.258113,190,0,0,0,,,,2015-05-28 15:00,2015-06-20 15:00,,2014-11-12 13:00,2014-12-04 13:00,2014-11-12 13:00,2014-12-04 13:00,2014-11-12 13:00,2014-12-04 13:00,2015-05-28 15:00,2015-06-20 15:00,,PT_Normal,,,,,rdq783/jp0es6fERaEhpCA,4A3irUpT6UO0cP41AiwbgA,,,N,0,0,,,2014-04-13 07:21,2014-04-14 16:04,admin,admin,
2159,142256,6971,39967,7842,0,N,N,N,CP_Phys,TT_Mile,DT_FixedDrtn,TK_NotStart,CZA-TK-0735-1448,Foundation Takeover From Client,,0,0,0,0,0,0,0,0,0,0,2014-03-23 00:00,,,2014-03-22 17:00,2014-03-22 17:00,,2014-03-23 07:00,2014-03-23 07:00,2014-03-23 07:00,2014-03-23 07:00,2014-03-23 07:00,2014-03-23 07:00,2014-03-22 17:00,2014-03-22 17:00,CS_MSO,PT_Normal,,,,,kGx7lffwrUee9bVzlycyIQ,NjV04l+2Bk+nJlN1lHnc3w,,,N,0,0,,,2014-04-13 07:21,2014-04-13 07:42,admin,admin,
2160,142257,6971,39968,7842,0,N,N,N,CP_Phys,TT_Task,DT_FixedDrtn,TK_NotStart,CZA-TK-0735-1431,Cutting of Annular Plates and Bottom Plates,8485,3228,0,10,0,968.115,968.115,10,0,0,0,,,,2015-01-04 15:00,2015-01-05 15:00,,2013-12-24 07:00,2013-12-24 17:00,2013-12-24 07:00,2013-12-24 17:00,2013-12-24 07:00,2013-12-24 17:00,2015-01-04 15:00,2015-01-05 15:00,,PT_Normal,,,,,meq2owPzFEu1JMQ+pqPEiw,sckqO6NPoUKOJx5ZwJOUcQ,,,N,0,0,,,2014-04-13 07:21,2014-04-14 17:03,admin,admin,
2161,142258,6971,39968,7842,0,N,N,N,CP_Phys,TT_Task,DT_FixedDrtn,TK_NotStart,CZA-TK-0735-1432,"Cutting,Bevelling & Rolling Shell No. 7",8485,3682,0,10,0,309.2355,309.2355,10,0,0,0,,,,2015-02-28 09:00,2015-03-01 09:00,,2013-12-25 07:00,2013-12-25 17:00,2013-12-25 07:00,2013-12-25 17:00,2013-12-25 07:00,2013-12-25 17:00,2015-02-28 09:00,2015-03-01 09:00,,PT_Normal,,,,,GkCRWNGprkq55ni6u7oWgA,CzEipOYCi0K/7yy6KTLjRA,,,N,0,0,,,2014-04-13 07:21,2014-04-14 17:03,admin,admin,
2162,142259,6971,39968,7842,0,N,N,N,CP_Phys,TT_Task,DT_FixedDrtn,TK_NotStart,CZA-TK-0735-1433,"Cutting , Beveling & Rolling Shell No.8",8485,3682,0,10,0,302.7939,302.7939,10,0,0,0,,,,2015-03-01 09:00,2015-03-02 09:00,,2013-12-26 07:00,2013-12-26 17:00,2013-12-26 07:00,2013-12-26 17:00,2013-12-26 07:00,2013-12-26 17:00,2015-03-01 09:00,2015-03-02 09:00,,PT_Normal,,,,,BhTJK4GP3Eqt/f6CWPaLRw,oyVnKWbRPEOiY6fN/K9DWw,,,N,0,0,,,2014-04-13 07:21,2014-04-14 17:03,admin,admin,
2163,142260,6971,39968,7842,0,N,N,N,CP_Phys,TT_Task,DT_FixedDrtn,TK_NotStart,CZA-TK-0735-1434,"Cutting, Fit-up and Weld of Shell Nozzles, Manholes & Other Appurtanances",8485,3682,0,50,0,0,0,50,0,0,0,,,,2015-03-02 09:00,2015-03-08 09:00,,2013-12-28 07:00,2014-01-01 17:00,2013-12-28 07:00,2014-01-01 17:00,2013-12-28 07:00,2014-01-01 17:00,2015-03-02 09:00,2015-03-08 09:00,,PT_Normal,,,,,DzUsjVv9JUWzd/Q/H9uhkw,m2LPK87RRkiwmZs697TJ2g,,,N,0,0,,,2014-04-13 07:21,2014-04-14 17:03,admin,admin,
2164,142261,6971,39968,7842,0,N,N,N,CP_Phys,TT_Task,DT_FixedDrtn,TK_NotStart,CZA-TK-0735-1435,"Cutting, Fit-up  & Welding Stairway Platform, Gratings and Handrails (Upper Part)",8485,3682,0,40,0,0,0,40,0,0,0,,,,2015-03-02 09:00,2015-03-07 09:00,,2013-12-28 07:00,2013-12-31 17:00,2013-12-28 07:00,2013-12-31 17:00,2013-12-28 07:00,2013-12-31 17:00,2015-03-02 09:00,2015-03-07 09:00,,PT_Normal,,,,,6sXZjED18kSlCaTiJyNwLQ,/yse09de1EO6PmdpnmTV9g,,,N,0,0,,,2014-04-13 07:21,2014-04-14 17:03,admin,admin,
2165,142262,6971,39968,7842,0,N,N,N,CP_Phys,TT_Task,DT_FixedDrtn,TK_NotStart,CZA-TK-0735-1436,Cutting of Deck Plates,8485,3682,0,20,0,621.36,621.36,20,0,0,0,,,,2015-03-07 09:00,2015-03-09 09:00,,2014-01-01 07:00,2014-01-02 17:00,2014-01-01 07:00,2014-01-02 17:00,2014-01-01 07:00,2014-01-02 17:00,2015-03-07 09:00,2015-03-09 09:00,,PT_Normal,,,,,H9vmlXPf00mSTSJ53lOzDA,cjlInpGat02TS+SnoTslgg,,,N,0,0,,,2014-04-13 07:21,2014-04-14 17:03,admin,admin,
2166,142263,6971,39968,7842,0,N,N,N,CP_Phys,TT_Task,DT_FixedDrtn,TK_NotStart,CZA-TK-0735-1437,"Cutting, Fit-up and Welding  of Pontoon",8485,3682,0,100,0,920.343,920.343,100,0,0,0,,,,2015-03-07 09:00,2015-03-18 09:00,,2014-01-01 07:00,2014-01-12 17:00,2014-01-01 07:00,2014-01-12 17:00,2014-01-01 07:00,2014-01-12 17:00,2015-03-07 09:00,2015-03-18 09:00,,PT_Normal,,,,,8k2EKbeCtkiHlo6/l/UzVQ,ig4rDkrWYEej/Rcxku7j1w,,,N,0,0,,,2014-04-13 07:21,2014-04-14 17:03,admin,admin,
2167,142264,6971,39968,7842,0,N,N,N,CP_Phys,TT_Task,DT_FixedDrtn,TK_NotStart,CZA-TK-0735-1438,Cutting of Floating Roof Legs and Manholes,8485,3682,0,40,0,0,0,40,0,0,0,,,,2015-03-18 09:00,2015-03-23 09:00,,2014-01-13 07:00,2014-01-16 17:00,2014-01-13 07:00,2014-01-16 17:00,2014-01-13 07:00,2014-01-16 17:00,2015-03-18 09:00,2015-03-23 09:00,,PT_Normal,,,,,CYYXViadT0qSEgwyUnIQ8Q,275EsBo26Ee1Yh8XTD71qg,,,N,0,0,,,2014-04-13 07:21,2014-04-14 17:03,admin,admin,
2168,142265,6971,39968,7842,0,N,N,N,CP_Phys,TT_Task,DT_FixedDrtn,TK_NotStart,CZA-TK-0735-1439,"Cutting, Fit-up & Welding Roof Structures & Compression Ring",8485,3682,0,50,0,850.608,850.608,50,0,0,0,,,,2015-03-23 09:00,2015-03-29 09:00,,2014-01-18 07:00,2014-01-22 17:00,2014-01-18 07:00,2014-01-22 17:00,2014-01-18 07:00,2014-01-22 17:00,2015-03-23 09:00,2015-03-29 09:00,,PT_Normal,,,,,vqJ3rvI9l0angnbi0asLKw,6ZFXBOZlwke5ySjRVmQonQ,,,N,0,0,,,2014-04-13 07:21,2014-04-14 17:03,admin,admin,
2169,142266,6971,39968,7842,0,N,N,N,CP_Phys,TT_Task,DT_FixedDrtn,TK_NotStart,CZA-TK-0735-1440,Cutting of Roof Plates,8485,3682,0,20,0,938.283,938.283,20,0,0,0,,,,2015-03-29 09:00,2015-03-31 09:00,,2014-01-23 07:00,2014-01-25 17:00,2014-01-23 07:00,2014-01-25 17:00,2014-01-23 07:00,2014-01-25 17:00,2015-03-29 09:00,2015-03-31 09:00,,PT_Normal,,,,,LchFW16NS02QAyZMoeCMtQ,pjCeCTTzQk27jceU0moxsg,,,N,0,0,,,2014-04-13 07:21,2014-04-14 17:03,admin,admin,
2170,142267,6971,39968,7842,0,N,N,N,CP_Phys,TT_Task,DT_FixedDrtn,TK_NotStart,CZA-TK-0735-1441,"Cutting, Fit-up and Welding of Roof Nozzles, Manholes and Other Appurtanances",8485,3682,0,50,0,0,0,50,0,0,0,,,,2015-03-31 09:00,2015-04-06 09:00,,2014-01-26 07:00,2014-01-30 17:00,2014-01-26 07:00,2014-01-30 17:00,2014-01-26 07:00,2014-01-30 17:00,2015-03-31 09:00,2015-04-06 09:00,,PT_Normal,,,,,5NsVa26iH0GxTYgplUc6yQ,GPcmIev+w0K8AJ7zYSEHZA,,,N,0,0,,,2014-04-13 07:21,2014-04-14 17:03,admin,admin,
2171,142268,6971,39968,7842,0,N,N,N,CP_Phys,TT_Task,DT_FixedDrtn,TK_NotStart,CZA-TK-0735-1442,"Cutting, Fit-up & Welding Roof Platform, Gratings and Handrails",8485,3682,0,40,0,0,0,40,0,0,0,,,,2015-04-01 15:00,2015-04-06 15:00,,2014-01-27 13:00,2014-02-01 13:00,2014-01-27 13:00,2014-02-01 13:00,2014-01-27 13:00,2014-02-01 13:00,2015-04-01 15:00,2015-04-06 15:00,,PT_Normal,,,,,G4pFKlELhkePNlB2Y+TPOw,RCPM+u5Eykqv9ML9w19Ktg,,,N,0,0,,,2014-04-13 07:21,2014-04-14 17:03,admin,admin,
2172,142269,6971,39968,7842,0,N,N,N,CP_Phys,TT_Task,DT_FixedDrtn,TK_NotStart,CZA-TK-0735-1443,"Cutting,Bevelling & Rolling Shell No. 6 & 5",8485,3682,0,10,0,673.0212,673.0212,10,0,0,0,,,,2015-04-06 15:00,2015-04-07 15:00,,2014-02-01 13:00,2014-02-02 13:00,2014-02-01 13:00,2014-02-02 13:00,2014-02-01 13:00,2014-02-02 13:00,2015-04-06 15:00,2015-04-07 15:00,,PT_Normal,,,,,U34yczshR0yU4Y2rR/qpcg,GOXNeDMnaU+cibzyDFCUQg,,,N,0,0,,,2014-04-13 07:21,2014-04-14 17:03,admin,admin,
2173,142270,6971,39968,7842,0,N,N,N,CP_Phys,TT_Task,DT_FixedDrtn,TK_NotStart,CZA-TK-0735-1444,"Cutting,Bevelling & Rolling Shell No. 4 & 3",8485,3682,0,10,0,894.195,894.195,10,0,0,0,,,,2015-04-07 15:00,2015-04-08 15:00,,2014-02-02 13:00,2014-02-03 13:00,2014-02-02 13:00,2014-02-03 13:00,2014-02-02 13:00,2014-02-03 13:00,2015-04-07 15:00,2015-04-08 15:00,,PT_Normal,,,,,cV7C7sIgJEmZ988ra3jUeA,BhV9QuUhkkexoNFDHmZOAA,,,N,0,0,,,2014-04-13 07:21,2014-04-14 17:03,admin,admin,
2174,142271,6971,39968,7842,0,N,N,N,CP_Phys,TT_Task,DT_FixedDrtn,TK_NotStart,CZA-TK-0735-1445,"Cutting,Bevelling & Rolling Shell No. 2 & 1",8485,3682,0,10,0,1340.3358,1340.3358,10,0,0,0,,,,2015-04-08 15:00,2015-04-09 15:00,,2014-02-03 13:00,2014-02-04 13:00,2014-02-03 13:00,2014-02-04 13:00,2014-02-03 13:00,2014-02-04 13:00,2015-04-08 15:00,2015-04-09 15:00,,PT_Normal,,,,,mP9xi7FXIUumrFhq9hkOqw,oPevUWltQEWEQSJBrfl0jQ,,,N,0,0,,,2014-04-13 07:21,2014-04-14 17:03,admin,admin,
2175,142272,6971,39968,7842,0,N,N,N,CP_Phys,TT_Task,DT_FixedDrtn,TK_NotStart,CZA-TK-0735-1446,"Cutting, Fit-up and Welding of Shell Nozzles, Manholes and Other Appurtanances",8485,3682,0,70,0,0,0,70,0,0,0,,,,2015-04-08 15:00,2015-04-16 15:00,,2014-02-03 13:00,2014-02-11 13:00,2014-02-03 13:00,2014-02-11 13:00,2014-02-03 13:00,2014-02-11 13:00,2015-04-08 15:00,2015-04-16 15:00,,PT_Normal,,,,,fU4IJQ7jP0KSe17zC8Ywmg,R5VQSF4JW0OudoahJbv/gg,,,N,0,0,,,2014-04-13 07:21,2014-04-14 17:03,admin,admin,
2176,142273,6971,39968,7842,0,N,N,N,CP_Phys,TT_Task,DT_FixedDrtn,TK_NotStart,CZA-TK-0735-1447,"Cutting, Fit-up and Welding of Stairway Platform, Gratings and Handrails (Lower Part)",8485,3682,1990,50,0,0,0,50,0,0,0,,,,2015-04-13 15:00,2015-04-19 15:00,,2014-02-08 13:00,2014-02-13 13:00,2014-02-08 13:00,2014-02-13 13:00,2014-02-08 13:00,2014-02-13 13:00,2015-04-13 15:00,2015-04-19 15:00,,PT_Normal,,,,,grSmRv1dPESvQDwNCtYhow,dgajbI3AJ0i43lZVkr9hgg,,,N,0,0,,,2014-04-13 07:21,2014-04-14 17:03,admin,admin,
2177,142274,6971,39948,7842,0,N,N,N,CP_Phys,TT_Mile,DT_FixedDrtn,TK_NotStart,CZA-TK-0720-1170,Foundation Takeover From Client,,0,0,0,0,0,0,0,0,0,0,2014-03-13 00:00,,,2014-03-12 17:00,2014-03-12 17:00,,2014-03-13 07:00,2014-03-13 07:00,2014-03-13 07:00,2014-03-13 07:00,2014-03-13 07:00,2014-03-13 07:00,2014-03-12 17:00,2014-03-12 17:00,CS_MSO,PT_Normal,,,,,TuP4rZna8katyUAalt3OYg,,,,N,0,0,,,2014-04-13 07:21,2014-04-13 07:42,admin,admin,
2178,142275,6971,40039,7842,0,N,N,N,CP_Phys,TT_Task,DT_FixedDrtn,TK_NotStart,CZA-TK-0720-1770,"Blasting and Painting Inside, Outside and Bottom Plates",8376,1800,0,110,0,3400.196738,3400.196738,110,0,0,0,,,,2015-06-07 15:00,2015-06-20 15:00,,2014-11-09 15:00,2014-11-22 15:00,2014-11-09 15:00,2014-11-22 15:00,2014-11-09 15:00,2014-11-22 15:00,2015-06-07 15:00,2015-06-20 15:00,,PT_Normal,,,,,0jzqvG2LJ06aGjrAK6a7IA,,,,N,0,0,,,2014-04-13 07:21,2014-04-14 17:03,admin,admin,
2179,142276,6971,40040,7842,0,N,N,N,CP_Phys,TT_Task,DT_FixedDrtn,TK_NotStart,CZA-TK-0720-1780,Tank Calibration,8376,1800,0,50,0,1133.398912,1133.398912,50,0,0,0,,,,2015-06-20 15:00,2015-06-25 15:00,,2014-11-22 15:00,2014-11-27 15:00,2014-11-22 15:00,2014-11-27 15:00,2014-11-22 15:00,2014-11-27 15:00,2015-06-20 15:00,2015-06-25 15:00,,PT_Normal,,,,,j+s0AtNmHU6xoo+XU/lxKw,,,,N,0,0,,,2014-04-13 07:21,2014-04-15 07:43,admin,admin,
2180,142277,6971,40040,7842,0,N,N,N,CP_Phys,TT_Task,DT_FixedDrtn,TK_NotStart,CZA-TK-0720-1790,Tank Handover,8376,1800,968,20,0,1133.398912,1133.398912,20,0,0,0,,,,2015-06-25 15:00,2015-06-28 15:00,,2014-11-27 15:00,2014-11-30 15:00,2014-11-27 15:00,2014-11-30 15:00,2014-11-27 15:00,2014-11-30 15:00,2015-06-25 15:00,2015-06-28 15:00,,PT_Normal,,,,,LfGja33eTkq945/CH9s1bg,,,,N,0,0,,,2014-04-13 07:21,2014-04-15 07:43,admin,admin,
2181,142278,6971,40041,7842,0,N,N,N,CP_Phys,TT_Task,DT_FixedDrtn,TK_NotStart,CZA-TK-0720-1760,"Filling, Holding and Draining of Water",8376,1800,0,70,0,5666.994564,5666.994564,70,0,0,0,,,,2015-05-30 15:00,2015-06-07 15:00,,2014-11-01 15:00,2014-11-09 15:00,2014-11-01 15:00,2014-11-09 15:00,2014-11-01 15:00,2014-11-09 15:00,2015-05-30 15:00,2015-06-07 15:00,,PT_Normal,,,,,Arh9aZsPCEyK17EmK3NEnQ,,,,N,0,0,,,2014-04-13 07:21,2014-04-14 16:04,admin,admin,
2182,142279,6971,40033,7842,0,N,N,N,CP_Phys,TT_Task,DT_FixedDrtn,TK_NotStart,CZA-TK-0720-1000,Cutting of Annular Plates and Bottom Plates,8482,2906,0,10,0,511.08,511.08,10,0,0,0,,,,2014-11-18 13:00,2014-11-19 13:00,,2013-12-15 07:00,2013-12-15 17:00,2013-12-15 07:00,2013-12-15 17:00,2013-12-15 07:00,2013-12-15 17:00,2014-11-18 13:00,2014-11-19 13:00,,PT_Normal,,,,,Jo7bM6UNwUqlCsZw+tEgUg,,,,N,0,0,,,2014-04-13 07:21,2014-04-14 17:03,admin,admin,
2183,142280,6971,40033,7842,0,N,N,N,CP_Phys,TT_Task,DT_FixedDrtn,TK_NotStart,CZA-TK-0720-1010,"Cutting,Bevelling & Rolling Shell No. 1",8482,3810,0,10,0,293.91,293.91,10,0,0,0,,,,2015-03-05 07:00,2015-03-05 17:00,,2013-12-16 07:00,2013-12-16 17:00,2013-12-16 07:00,2013-12-16 17:00,2013-12-16 07:00,2013-12-16 17:00,2015-03-05 07:00,2015-03-05 17:00,,PT_Normal,,,,,frrjQmH4aUO8k1lWsUZZdg,,,,N,0,0,,,2014-04-13 07:21,2014-04-14 17:03,admin,admin,
2184,142281,6971,40033,7842,0,N,N,N,CP_Phys,TT_Task,DT_FixedDrtn,TK_NotStart,CZA-TK-0720-1020,"Cutting , Beveling & Rolling Shell No.2",8482,3810,0,10,0,264.57,264.57,10,0,0,0,,,,2015-03-07 07:00,2015-03-07 17:00,,2013-12-17 07:00,2013-12-17 17:00,2013-12-17 07:00,2013-12-17 17:00,2013-12-17 07:00,2013-12-17 17:00,2015-03-07 07:00,2015-03-07 17:00,,PT_Normal,,,,,XvY7L7kBv024Hh2PLNpVBA,,,,N,0,0,,,2014-04-13 07:21,2014-04-14 17:03,admin,admin,
2185,142282,6971,40033,7842,0,N,N,N,CP_Phys,TT_Task,DT_FixedDrtn,TK_NotStart,CZA-TK-0720-1030,"Cutting, Fit-up and Weld of Shell Nozzles, Manholes & Other Appurtanances",8482,3810,0,50,0,39.5649,39.5649,50,0,0,0,,,,2015-03-08 07:00,2015-03-12 17:00,,2013-12-18 07:00,2013-12-23 17:00,2013-12-18 07:00,2013-12-23 17:00,2013-12-18 07:00,2013-12-23 17:00,2015-03-08 07:00,2015-03-12 17:00,,PT_Normal,,,,,DQ3OiKkmckSHJqnQ7FAxYg,,,,N,0,0,,,2014-04-13 07:21,2014-04-14 17:03,admin,admin,
2186,142283,6971,40033,7842,0,N,N,N,CP_Phys,TT_Task,DT_FixedDrtn,TK_NotStart,CZA-TK-0720-1040,"Cutting, Bevelling  & Rolling Shell No.3",8482,3810,0,10,0,226.86,226.86,10,0,0,0,,,,2015-03-09 13:00,2015-03-10 13:00,,2013-12-19 13:00,2013-12-21 13:00,2013-12-19 13:00,2013-12-21 13:00,2013-12-19 13:00,2013-12-21 13:00,2015-03-09 13:00,2015-03-10 13:00,,PT_Normal,,,,,Aa0pnUrPk0WNi9BAvQTMFA,,,,N,0,0,,,2014-04-13 07:21,2014-04-14 17:03,admin,admin,
2187,142284,6971,40033,7842,0,N,N,N,CP_Phys,TT_Task,DT_FixedDrtn,TK_NotStart,CZA-TK-0720-1060,"Cutting, Fit-up and Welding  of Pontoon",8482,3810,0,100,0,1512.681,1512.681,100,0,0,0,,,,2015-03-12 13:00,2015-03-24 13:00,,2013-12-23 13:00,2014-01-04 13:00,2013-12-23 13:00,2014-01-04 13:00,2013-12-23 13:00,2014-01-04 13:00,2015-03-12 13:00,2015-03-24 13:00,,PT_Normal,,,,,uGhLa5LGeEuberQtgaiC0w,,,,N,0,0,,,2014-04-13 07:21,2014-04-14 17:03,admin,admin,
2188,142285,6971,40033,7842,0,N,N,N,CP_Phys,TT_Task,DT_FixedDrtn,TK_NotStart,CZA-TK-0720-1070,Cutting of Floating Roof Legs and Manholes,8482,3810,0,40,0,0,0,40,0,0,0,,,,2015-03-17 13:00,2015-03-22 13:00,,2013-12-28 13:00,2014-01-01 13:00,2013-12-28 13:00,2014-01-01 13:00,2013-12-28 13:00,2014-01-01 13:00,2015-03-17 13:00,2015-03-22 13:00,,PT_Normal,,,,,6ilWXix0pkq1Og8I3mNJLQ,,,,N,0,0,,,2014-04-13 07:21,2014-04-14 17:03,admin,admin,
2189,142286,6971,40033,7842,0,N,N,N,CP_Phys,TT_Task,DT_FixedDrtn,TK_NotStart,CZA-TK-0720-1080,"Cutting, Bevelling & Rolling Shell No.4",8482,3810,0,10,0,226.86,226.86,10,0,0,0,,,,2015-03-22 13:00,2015-03-23 13:00,,2014-01-01 13:00,2014-01-02 13:00,2014-01-01 13:00,2014-01-02 13:00,2014-01-01 13:00,2014-01-02 13:00,2015-03-22 13:00,2015-03-23 13:00,,PT_Normal,,,,,2wK4tJ1tv0i+h4pJQGnXAA,,,,N,0,0,,,2014-04-13 07:21,2014-04-14 17:03,admin,admin,
2190,142287,6971,40033,7842,0,N,N,N,CP_Phys,TT_Task,DT_FixedDrtn,TK_NotStart,CZA-TK-0720-1090,"Cutting, Bevelling & Rolling Shell No.5",8482,3810,0,10,0,226.86,226.86,10,0,0,0,,,,2015-03-22 13:00,2015-03-23 13:00,,2014-01-01 13:00,2014-01-02 13:00,2014-01-01 13:00,2014-01-02 13:00,2014-01-01 13:00,2014-01-02 13:00,2015-03-22 13:00,2015-03-23 13:00,,PT_Normal,,,,,vHGaiJLe+kWzFXLZSbfM4Q,,,,N,0,0,,,2014-04-13 07:21,2014-04-14 17:03,admin,admin,
2191,142288,6971,40033,7842,0,N,N,N,CP_Phys,TT_Task,DT_FixedDrtn,TK_NotStart,CZA-TK-0720-1100,"Cutting, Bevelling & Rolling Shell No.6",8482,3810,0,10,0,49.14,49.14,10,0,0,0,,,,2015-03-23 13:00,2015-03-24 13:00,,2014-01-02 13:00,2014-01-04 13:00,2014-01-02 13:00,2014-01-04 13:00,2014-01-02 13:00,2014-01-04 13:00,2015-03-23 13:00,2015-03-24 13:00,,PT_Normal,,,,,HNI6Gn6TGUulg+NBWpT60Q,,,,N,0,0,,,2014-04-13 07:21,2014-04-14 17:03,admin,admin,
2192,142289,6971,40033,7842,0,N,N,N,CP_Phys,TT_Task,DT_FixedDrtn,TK_NotStart,CZA-TK-0720-1110,"Cutting, Bevelling & Rolling Shell no.7",8482,3810,0,10,0,205.92,205.92,10,0,0,0,,,,2015-03-24 13:00,2015-03-25 13:00,,2014-01-04 13:00,2014-01-05 13:00,2014-01-04 13:00,2014-01-05 13:00,2014-01-04 13:00,2014-01-05 13:00,2015-03-24 13:00,2015-03-25 13:00,,PT_Normal,,,,,dsh+YiHgvEqMiBHu2+U8fw,,,,N,0,0,,,2014-04-13 07:21,2014-04-14 17:03,admin,admin,
2193,142290,6971,40033,7842,0,N,N,N,CP_Phys,TT_Task,DT_FixedDrtn,TK_NotStart,CZA-TK-0720-1120,"Cutting, Fit-up & Welding Roof Structures & Compression Ring",8482,3810,0,60,0,426.2298,426.2298,60,0,0,0,,,,2015-03-25 13:00,2015-04-01 13:00,,2014-01-05 13:00,2014-01-12 13:00,2014-01-05 13:00,2014-01-12 13:00,2014-01-05 13:00,2014-01-12 13:00,2015-03-25 13:00,2015-04-01 13:00,,PT_Normal,,,,,JScBLbrwBk2G3JbZLvcJJA,,,,N,0,0,,,2014-04-13 07:21,2014-04-14 17:03,admin,admin,
2194,142291,6971,40033,7842,0,N,N,N,CP_Phys,TT_Task,DT_FixedDrtn,TK_NotStart,CZA-TK-0720-1130,Cutting of Roof Plates,8482,3810,0,20,0,540.8826,540.8826,20,0,0,0,,,,2015-04-01 13:00,2015-04-04 13:00,,2014-01-12 13:00,2014-01-14 13:00,2014-01-12 13:00,2014-01-14 13:00,2014-01-12 13:00,2014-01-14 13:00,2015-04-01 13:00,2015-04-04 13:00,,PT_Normal,,,,,gRQSf05BokaZzBCddgqyUQ,,,,N,0,0,,,2014-04-13 07:21,2014-04-14 17:03,admin,admin,
2195,142292,6971,40033,7842,0,N,N,N,CP_Phys,TT_Task,DT_FixedDrtn,TK_NotStart,CZA-TK-0720-1140,"Cutting, Fit-up & Welding Roof Platform, Gratings and Handrails",8482,3810,0,100,0,0,0,100,0,0,0,,,,2015-04-01 13:00,2015-04-13 13:00,,2014-01-12 13:00,2014-01-23 13:00,2014-01-12 13:00,2014-01-23 13:00,2014-01-12 13:00,2014-01-23 13:00,2015-04-01 13:00,2015-04-13 13:00,,PT_Normal,,,,,E8/q+dUAR0+zvKdQSx4F2w,,,,N,0,0,,,2014-04-13 07:21,2014-04-14 17:03,admin,admin,
2196,142293,6971,40033,7842,0,N,N,N,CP_Phys,TT_Task,DT_FixedDrtn,TK_NotStart,CZA-TK-0720-1150,"Cutting, Fit-up and Welding of Stairways",8482,3810,0,70,0,0,0,70,0,0,0,,,,2015-04-13 13:00,2015-04-21 13:00,,2014-01-23 13:00,2014-02-01 13:00,2014-01-23 13:00,2014-02-01 13:00,2014-01-23 13:00,2014-02-01 13:00,2015-04-13 13:00,2015-04-21 13:00,,PT_Normal,,,,,wpOtIRkr/0arTSIjVpyzxw,,,,N,0,0,,,2014-04-13 07:21,2014-04-14 17:03,admin,admin,
2197,142294,6971,40033,7842,0,N,N,N,CP_Phys,TT_Task,DT_FixedDrtn,TK_NotStart,CZA-TK-0720-1160,"Cutting, Fit-up and Welding of Roof Nozzles, Manholes and Other Appurtanances",8482,3810,1448,50,0,0,0,50,0,0,0,,,,2015-04-16 15:00,2015-04-22 15:00,,2014-01-27 15:00,2014-02-02 15:00,2014-01-27 15:00,2014-02-02 15:00,2014-01-27 15:00,2014-02-02 15:00,2015-04-16 15:00,2015-04-22 15:00,,PT_Normal,,,,,ji2Pz72ESU6v6R/FVb4LPA,,,,N,0,0,,,2014-04-13 07:21,2014-04-14 17:03,admin,admin,
2198,142295,6971,40033,7842,0,N,N,N,CP_Phys,TT_Task,DT_FixedDrtn,TK_NotStart,CZA-TK-0720-1050,Cutting of Floating Roof Plates,8482,3810,0,20,0,77.2584,77.2584,20,0,0,0,,,,2015-03-10 13:00,2015-03-12 13:00,,2013-12-21 13:00,2013-12-23 13:00,2013-12-21 13:00,2013-12-23 13:00,2013-12-21 13:00,2013-12-23 13:00,2015-03-10 13:00,2015-03-12 13:00,,PT_Normal,,,,,QrI4REam9UyByNUrvNFd8g,,,,N,0,0,,,2014-04-13 07:21,2014-04-14 17:03,admin,admin,
2199,142296,6971,40362,7842,0,N,N,N,CP_Phys,TT_Task,DT_FixedDrtn,TK_NotStart,CZA-TK-0720-1580,Erection and Fit-up,8376,2362,0,30,0,373.185316,373.185316,30,90,0,90,,,,2015-03-25 15:00,2015-03-29 15:00,,2014-06-23 13:00,2014-06-26 13:00,2014-06-23 13:00,2014-06-26 13:00,2014-06-23 13:00,2014-06-26 13:00,2015-03-25 15:00,2015-03-29 15:00,,PT_Normal,,,,,3SsL15g1MkeOvLzgDYbzNw,,,,N,0,0,,,2014-04-13 07:21,2014-04-14 16:04,admin,admin,
2200,142297,6971,40362,7842,0,N,N,N,CP_Phys,TT_Task,DT_FixedDrtn,TK_NotStart,CZA-TK-0720-1590,Welding,8376,2362,0,50,0,466.481646,466.481646,50,150,0,150,,,,2015-03-29 15:00,2015-04-04 15:00,,2014-06-26 13:00,2014-07-02 13:00,2014-06-26 13:00,2014-07-02 13:00,2014-06-26 13:00,2014-07-02 13:00,2015-03-29 15:00,2015-04-04 15:00,,PT_Normal,,,,,DnDxEVlDzk6hDKHX48DWJg,,,,N,0,0,,,2014-04-13 07:21,2014-04-14 17:03,admin,admin,
2201,142298,6971,40362,7842,0,N,N,N,CP_Phys,TT_Task,DT_FixedDrtn,TK_NotStart,CZA-TK-0720-1600,Inspection,8376,2362,0,80,0,93.29633,93.29633,80,0,0,0,,,,2015-03-25 15:00,2015-04-04 15:00,,2014-06-23 13:00,2014-07-02 13:00,2014-06-23 13:00,2014-07-02 13:00,2014-06-23 13:00,2014-07-02 13:00,2015-03-25 15:00,2015-04-04 15:00,,PT_Normal,,,,,zqD64l4XiUKsclAFRDTQUg,,,,N,0,0,,,2014-04-13 07:21,2014-04-14 17:03,admin,admin,
2202,142299,6971,40363,7842,0,N,N,N,CP_Phys,TT_Task,DT_FixedDrtn,TK_NotStart,CZA-TK-0720-1320,Laying & Fit-up,8376,2362,0,20,0,0,0,20,60,0,60,,,,2015-01-18 15:00,2015-01-20 15:00,,2014-04-17 13:00,2014-04-20 13:00,2014-04-17 13:00,2014-04-20 13:00,2014-04-17 13:00,2014-04-20 13:00,2015-01-18 15:00,2015-01-20 15:00,,PT_Normal,,,,,l+iWvJE520SScluLkYYKIw,,,,N,0,0,,,2014-04-13 07:21,2014-04-14 16:04,admin,admin,
2203,142300,6971,40363,7842,0,N,N,N,CP_Phys,TT_Task,DT_FixedDrtn,TK_NotStart,CZA-TK-0720-1340,Welding,8376,2362,0,110,0,0,0,110,330,0,330,,,,2015-01-20 15:00,2015-02-02 15:00,,2014-04-20 13:00,2014-05-03 13:00,2014-04-20 13:00,2014-05-03 13:00,2014-04-20 13:00,2014-05-03 13:00,2015-01-20 15:00,2015-02-02 15:00,,PT_Normal,,,,,QayN8a2X6kKGlSKY+I+eEQ,,,,N,0,0,,,2014-04-13 07:21,2014-04-14 16:04,admin,admin,
2204,142301,6971,40363,7842,0,N,N,N,CP_Phys,TT_Task,DT_FixedDrtn,TK_NotStart,CZA-TK-0720-1350,Inspection,8376,2362,0,130,0,0,0,130,0,0,0,,,,2015-01-18 15:00,2015-02-02 15:00,,2014-04-17 13:00,2014-05-03 13:00,2014-04-17 13:00,2014-05-03 13:00,2014-04-17 13:00,2014-05-03 13:00,2015-01-18 15:00,2015-02-02 15:00,,PT_Normal,,,,,G2+cLKVh0E+VeJe4784SxQ,,,,N,0,0,,,2014-04-13 07:21,2014-04-14 16:04,admin,admin,
2205,142302,6971,40255,7842,0,N,N,N,CP_Phys,TT_Task,DT_FixedDrtn,TK_NotStart,CZA-TK-0720-1230,Erection and Fit-up,8376,2362,0,10,0,257.332772,257.332772,10,0,0,0,,,,2014-12-30 15:00,2014-12-31 15:00,,2014-03-30 13:00,2014-03-31 13:00,2014-03-30 13:00,2014-03-31 13:00,2014-03-30 13:00,2014-03-31 13:00,2014-12-30 15:00,2014-12-31 15:00,,PT_Normal,,,,,T6vTb7aCfUKamIt4qm7Hrw,,,,N,0,0,,,2014-04-13 07:21,2014-04-14 17:03,admin,admin,
2206,142303,6971,40255,7842,0,N,N,N,CP_Phys,TT_Task,DT_FixedDrtn,TK_NotStart,CZA-TK-0720-1240,Welding,8376,2362,0,50,0,321.665966,321.665966,50,150,0,150,,,,2014-12-31 15:00,2015-01-06 15:00,,2014-03-31 13:00,2014-04-06 13:00,2014-03-31 13:00,2014-04-06 13:00,2014-03-31 13:00,2014-04-06 13:00,2014-12-31 15:00,2015-01-06 15:00,,PT_Normal,,,,,ZvPk8t83BEGoiiitkjoNAg,,,,N,0,0,,,2014-04-13 07:21,2014-04-15 07:43,admin,admin,
2207,142304,6971,40255,7842,0,N,N,N,CP_Phys,TT_Task,DT_FixedDrtn,TK_NotStart,CZA-TK-0720-1250,Inspection,8376,2362,0,60,0,64.333194,64.333194,60,0,0,0,,,,2014-12-30 15:00,2015-01-06 15:00,,2014-03-30 13:00,2014-04-06 13:00,2014-03-30 13:00,2014-04-06 13:00,2014-03-30 13:00,2014-04-06 13:00,2014-12-30 15:00,2015-01-06 15:00,,PT_Normal,,,,,ex2+uhSXcEKToNwfGX9JRw,,,,N,0,0,,,2014-04-13 07:21,2014-04-14 17:03,admin,admin,
2208,142305,6971,40197,7842,0,N,N,N,CP_Phys,TT_Task,DT_FixedDrtn,TK_NotStart,CZA-TK-0720-1700,Erection and Fit-up,8376,2362,0,30,0,0,0,30,90,0,90,,,,2015-04-28 15:00,2015-05-02 15:00,,2014-07-27 13:00,2014-07-30 13:00,2014-07-27 13:00,2014-07-30 13:00,2014-07-27 13:00,2014-07-30 13:00,2015-04-28 15:00,2015-05-02 15:00,,PT_Normal,,,,,H8/m2FsjWE6DUTXf8yYeng,,,,N,0,0,,,2014-04-13 07:21,2014-04-14 16:04,admin,admin,
2209,142306,6971,40197,7842,0,N,N,N,CP_Phys,TT_Task,DT_FixedDrtn,TK_NotStart,CZA-TK-0720-1710,Welding,8376,2362,0,80,0,0,0,80,240,0,240,,,,2015-05-02 15:00,2015-05-11 15:00,,2014-07-30 13:00,2014-08-09 13:00,2014-07-30 13:00,2014-08-09 13:00,2014-07-30 13:00,2014-08-09 13:00,2015-05-02 15:00,2015-05-11 15:00,,PT_Normal,,,,,/qvePpIUmEKf9ziG2vSLaw,,,,N,0,0,,,2014-04-13 07:21,2014-04-14 16:04,admin,admin,
2210,142307,6971,40197,7842,0,N,N,N,CP_Phys,TT_Task,DT_FixedDrtn,TK_NotStart,CZA-TK-0720-1720,Inspection,8376,2362,0,110,0,0,0,110,0,0,0,,,,2015-04-28 15:00,2015-05-11 15:00,,2014-07-27 13:00,2014-08-09 13:00,2014-07-27 13:00,2014-08-09 13:00,2014-07-27 13:00,2014-08-09 13:00,2015-04-28 15:00,2015-05-11 15:00,,PT_Normal,,,,,L3KhY0jK0EKFcLrvvVYS9Q,,,,N,0,0,,,2014-04-13 07:21,2014-04-14 16:04,admin,admin,
2211,142308,6971,40266,7842,0,N,N,N,CP_Phys,TT_Task,DT_FixedDrtn,TK_NotStart,CZA-TK-0720-1360,"Cutting of All Holes, Laying & Fit-up",8376,2362,0,10,0,1324.427192,1324.427192,10,30,0,30,,,,2015-02-02 15:00,2015-02-03 15:00,,2014-05-03 13:00,2014-05-04 13:00,2014-05-03 13:00,2014-05-04 13:00,2014-05-03 13:00,2014-05-04 13:00,2015-02-02 15:00,2015-02-03 15:00,,PT_Normal,,,,,BP6qKMUdeEK6f0ACDRpeHA,,,,N,0,0,,,2014-04-13 07:21,2014-04-14 17:03,admin,admin,
2212,142309,6971,40266,7842,0,N,N,N,CP_Phys,TT_Task,DT_FixedDrtn,TK_NotStart,CZA-TK-0720-1370,Welding of Sleeves and Plates,8376,2362,0,80,0,1655.53399,1655.53399,80,240,0,240,,,,2015-02-03 15:00,2015-02-12 15:00,,2014-05-04 13:00,2014-05-13 13:00,2014-05-04 13:00,2014-05-13 13:00,2014-05-04 13:00,2014-05-13 13:00,2015-02-03 15:00,2015-02-12 15:00,,PT_Normal,,,,,MpYOZr/cT0KucB/0TBLuEA,,,,N,0,0,,,2014-04-13 07:21,2014-04-14 17:03,admin,admin,
2213,142310,6971,40266,7842,0,N,N,N,CP_Phys,TT_Task,DT_FixedDrtn,TK_NotStart,CZA-TK-0720-1380,Installation of Leg Support,8376,2362,0,10,0,165.5534,165.5534,10,30,0,30,,,,2015-02-12 15:00,2015-02-14 15:00,,2014-05-13 13:00,2014-05-14 13:00,2014-05-13 13:00,2014-05-14 13:00,2014-05-13 13:00,2014-05-14 13:00,2015-02-12 15:00,2015-02-14 15:00,,PT_Normal,,,,,zvWmmlF+YkGisgxpFNzsyA,,,,N,0,0,,,2014-04-13 07:21,2014-04-14 17:03,admin,admin,
2214,142311,6971,40266,7842,0,N,N,N,CP_Phys,TT_Task,DT_FixedDrtn,TK_NotStart,CZA-TK-0720-1390,Inspection,8376,2362,0,100,0,165.5534,165.5534,100,0,0,0,,,,2015-02-02 15:00,2015-02-14 15:00,,2014-05-03 13:00,2014-05-14 13:00,2014-05-03 13:00,2014-05-14 13:00,2014-05-03 13:00,2014-05-14 13:00,2015-02-02 15:00,2015-02-14 15:00,,PT_Normal,,,,,cYTPClPtSEeuP8kpgJd/tA,,,,N,0,0,,,2014-04-13 07:21,2014-04-14 17:03,admin,admin,
2215,142312,6971,40158,7842,0,N,N,N,CP_Phys,TT_Task,DT_FixedDrtn,TK_NotStart,CZA-TK-0720-1400,Erection and Fit-up,8376,2362,0,10,0,198.627174,198.627174,10,30,0,30,,,,2015-02-14 15:00,2015-02-15 15:00,,2014-05-14 13:00,2014-05-15 13:00,2014-05-14 13:00,2014-05-15 13:00,2014-05-14 13:00,2014-05-15 13:00,2015-02-14 15:00,2015-02-15 15:00,,PT_Normal,,,,,eub/rFzC/UyX+IfZxpDGew,,,,N,0,0,,,2014-04-13 07:21,2014-04-14 16:04,admin,admin,
2216,142313,6971,40158,7842,0,N,N,N,CP_Phys,TT_Task,DT_FixedDrtn,TK_NotStart,CZA-TK-0720-1410,Welding,8376,2362,0,50,0,248.283968,248.283968,50,150,0,150,,,,2015-02-15 15:00,2015-02-21 15:00,,2014-05-15 13:00,2014-05-21 13:00,2014-05-15 13:00,2014-05-21 13:00,2014-05-15 13:00,2014-05-21 13:00,2015-02-15 15:00,2015-02-21 15:00,,PT_Normal,,,,,NXaKyjaF+0q26QKmotXR3A,,,,N,0,0,,,2014-04-13 07:21,2014-04-14 16:04,admin,admin,
2217,142314,6971,40158,7842,0,N,N,N,CP_Phys,TT_Task,DT_FixedDrtn,TK_NotStart,CZA-TK-0720-1420,Inspection,8376,2362,0,60,0,49.656794,49.656794,60,0,0,0,,,,2015-02-14 15:00,2015-02-21 15:00,,2014-05-14 13:00,2014-05-21 13:00,2014-05-14 13:00,2014-05-21 13:00,2014-05-14 13:00,2014-05-21 13:00,2015-02-14 15:00,2015-02-21 15:00,,PT_Normal,,,,,Jx6GCuryEkyxotZAM4nXYg,,,,N,0,0,,,2014-04-13 07:21,2014-04-14 16:04,admin,admin,
2218,142315,6971,40151,7842,0,N,N,N,CP_Phys,TT_Task,DT_FixedDrtn,TK_NotStart,CZA-TK-0720-1550,"Cutting, Installation and Fit-up",8376,2362,0,20,0,0,0,20,60,0,60,,,,2015-03-21 15:00,2015-03-23 15:00,,2014-06-18 13:00,2014-06-21 13:00,2014-06-18 13:00,2014-06-21 13:00,2014-06-18 13:00,2014-06-21 13:00,2015-03-21 15:00,2015-03-23 15:00,,PT_Normal,,,,,Qjf8OtC25USBNu2ZhYKV0g,,,,N,0,0,,,2014-04-13 07:21,2014-04-14 16:04,admin,admin,
2219,142316,6971,40151,7842,0,N,N,N,CP_Phys,TT_Task,DT_FixedDrtn,TK_NotStart,CZA-TK-0720-1560,Welding,8376,2362,0,20,0,0,0,20,60,0,60,,,,2015-03-23 15:00,2015-03-25 15:00,,2014-06-21 13:00,2014-06-23 13:00,2014-06-21 13:00,2014-06-23 13:00,2014-06-21 13:00,2014-06-23 13:00,2015-03-23 15:00,2015-03-25 15:00,,PT_Normal,,,,,GumKtR3+aUuuWhmwJfyPQQ,,,,N,0,0,,,2014-04-13 07:21,2014-04-14 16:04,admin,admin,
2220,142317,6971,40151,7842,0,N,N,N,CP_Phys,TT_Task,DT_FixedDrtn,TK_NotStart,CZA-TK-0720-1570,Inspection,8376,2362,0,40,0,0,0,40,0,0,0,,,,2015-03-21 15:00,2015-03-25 15:00,,2014-06-18 13:00,2014-06-23 13:00,2014-06-18 13:00,2014-06-23 13:00,2014-06-18 13:00,2014-06-23 13:00,2015-03-21 15:00,2015-03-25 15:00,,PT_Normal,,,,,0bwQNTDwE0eTK8rHhg/0xA,,,,N,0,0,,,2014-04-13 07:21,2014-04-14 16:04,admin,admin,
2221,142318,6971,40168,7842,0,N,N,N,CP_Phys,TT_Task,DT_FixedDrtn,TK_NotStart,CZA-TK-0720-1430,Erection and Fit-up,8376,2362,0,10,0,198.627174,198.627174,10,30,0,30,,,,2015-02-21 15:00,2015-02-22 15:00,,2014-05-21 13:00,2014-05-22 13:00,2014-05-21 13:00,2014-05-22 13:00,2014-05-21 13:00,2014-05-22 13:00,2015-02-21 15:00,2015-02-22 15:00,,PT_Normal,,,,,Smz0QRMBrEWL8BPK7mNcFA,,,,N,0,0,,,2014-04-13 07:21,2014-04-14 16:04,admin,admin,
2222,142319,6971,40168,7842,0,N,N,N,CP_Phys,TT_Task,DT_FixedDrtn,TK_NotStart,CZA-TK-0720-1440,Welding,8376,2362,0,50,0,248.283968,248.283968,50,150,0,150,,,,2015-02-22 15:00,2015-02-28 15:00,,2014-05-22 13:00,2014-05-28 13:00,2014-05-22 13:00,2014-05-28 13:00,2014-05-22 13:00,2014-05-28 13:00,2015-02-22 15:00,2015-02-28 15:00,,PT_Normal,,,,,8rlOkmRB7EifRL8lneOUFg,,,,N,0,0,,,2014-04-13 07:21,2014-04-14 16:04,admin,admin,
2223,142320,6971,40168,7842,0,N,N,N,CP_Phys,TT_Task,DT_FixedDrtn,TK_NotStart,CZA-TK-0720-1450,Inspection,8376,2362,0,60,0,49.656794,49.656794,60,0,0,0,,,,2015-02-21 15:00,2015-02-28 15:00,,2014-05-21 13:00,2014-05-28 13:00,2014-05-21 13:00,2014-05-28 13:00,2014-05-21 13:00,2014-05-28 13:00,2015-02-21 15:00,2015-02-28 15:00,,PT_Normal,,,,,MEZJbbBCNEiRlnnLfjWXbA,,,,N,0,0,,,2014-04-13 07:21,2014-04-14 16:04,admin,admin,
2224,142321,6971,40144,7842,0,N,N,N,CP_Phys,TT_Task,DT_FixedDrtn,TK_NotStart,CZA-TK-0720-1480,Inspection,8376,2362,0,60,0,49.656794,49.656794,60,0,0,0,,,,2015-02-28 15:00,2015-03-07 15:00,,2014-05-28 13:00,2014-06-04 13:00,2014-05-28 13:00,2014-06-04 13:00,2014-05-28 13:00,2014-06-04 13:00,2015-02-28 15:00,2015-03-07 15:00,,PT_Normal,,,,,SmjONVrioEC++v4rcvEFOw,,,,N,0,0,,,2014-04-13 07:21,2014-04-14 16:04,admin,admin,
2225,142322,6971,40144,7842,0,N,N,N,CP_Phys,TT_Task,DT_FixedDrtn,TK_NotStart,CZA-TK-0720-1460,Erection and Fit-up,8376,2362,0,10,0,198.627174,198.627174,10,30,0,30,,,,2015-02-28 15:00,2015-03-01 15:00,,2014-05-28 13:00,2014-05-29 13:00,2014-05-28 13:00,2014-05-29 13:00,2014-05-28 13:00,2014-05-29 13:00,2015-02-28 15:00,2015-03-01 15:00,,PT_Normal,,,,,20vl4rurjEez1OQvK9u6dA,,,,N,0,0,,,2014-04-13 07:21,2014-04-14 16:04,admin,admin,
2226,142323,6971,40144,7842,0,N,N,N,CP_Phys,TT_Task,DT_FixedDrtn,TK_NotStart,CZA-TK-0720-1470,Welding,8376,2362,0,50,0,248.283968,248.283968,50,150,0,150,,,,2015-03-01 15:00,2015-03-07 15:00,,2014-05-29 13:00,2014-06-04 13:00,2014-05-29 13:00,2014-06-04 13:00,2014-05-29 13:00,2014-06-04 13:00,2015-03-01 15:00,2015-03-07 15:00,,PT_Normal,,,,,oJXl+K49sk6Ad5MniNm0qg,,,,N,0,0,,,2014-04-13 07:21,2014-04-14 16:04,admin,admin,
2227,142324,6971,40176,7842,0,N,N,N,CP_Phys,TT_Task,DT_FixedDrtn,TK_NotStart,CZA-TK-0720-1490,Erection and Fit-up,8376,2362,0,10,0,43.024506,43.024506,10,30,0,30,,,,2015-03-07 15:00,2015-03-08 15:00,,2014-06-04 13:00,2014-06-05 13:00,2014-06-04 13:00,2014-06-05 13:00,2014-06-04 13:00,2014-06-05 13:00,2015-03-07 15:00,2015-03-08 15:00,,PT_Normal,,,,,M/fjcYumMEus7+CUiyGJqg,,,,N,0,0,,,2014-04-13 07:21,2014-04-14 16:04,admin,admin,
2228,142325,6971,40176,7842,0,N,N,N,CP_Phys,TT_Task,DT_FixedDrtn,TK_NotStart,CZA-TK-0720-1500,Welding,8376,2362,0,50,0,53.780632,53.780632,50,150,0,150,,,,2015-03-08 15:00,2015-03-14 15:00,,2014-06-05 13:00,2014-06-11 13:00,2014-06-05 13:00,2014-06-11 13:00,2014-06-05 13:00,2014-06-11 13:00,2015-03-08 15:00,2015-03-14 15:00,,PT_Normal,,,,,NGYc7hDX9k2lEFPpa/9+WQ,,,,N,0,0,,,2014-04-13 07:21,2014-04-14 16:04,admin,admin,
2229,142326,6971,40176,7842,0,N,N,N,CP_Phys,TT_Task,DT_FixedDrtn,TK_NotStart,CZA-TK-0720-1510,Inspection,8376,2362,0,10,0,10.756126,10.756126,10,0,0,0,,,,2015-03-12 15:00,2015-03-14 15:00,,2014-06-10 13:00,2014-06-11 13:00,2014-06-10 13:00,2014-06-11 13:00,2014-06-10 13:00,2014-06-11 13:00,2015-03-12 15:00,2015-03-14 15:00,,PT_Normal,,,,,vVU8lrhTQkSsHT1AHfsxeA,,,,N,0,0,,,2014-04-13 07:21,2014-04-14 16:04,admin,admin,
2230,142327,6971,40263,7842,0,N,N,N,CP_Phys,TT_Task,DT_FixedDrtn,TK_NotStart,CZA-TK-0720-1520,Erection and Fit-up,8376,2362,0,10,0,180.293166,180.293166,10,30,0,30,,,,2015-03-14 15:00,2015-03-15 15:00,,2014-06-11 13:00,2014-06-12 13:00,2014-06-11 13:00,2014-06-12 13:00,2014-06-11 13:00,2014-06-12 13:00,2015-03-14 15:00,2015-03-15 15:00,,PT_Normal,,,,,bW5xZc5DLk6M+AGaVTzY4A,,,,N,0,0,,,2014-04-13 07:21,2014-04-14 17:03,admin,admin,
2231,142328,6971,40263,7842,0,N,N,N,CP_Phys,TT_Task,DT_FixedDrtn,TK_NotStart,CZA-TK-0720-1530,Welding,8376,2362,0,50,0,225.366458,225.366458,50,150,0,150,,,,2015-03-15 15:00,2015-03-21 15:00,,2014-06-12 13:00,2014-06-18 13:00,2014-06-12 13:00,2014-06-18 13:00,2014-06-12 13:00,2014-06-18 13:00,2015-03-15 15:00,2015-03-21 15:00,,PT_Normal,,,,,O4d0/VzzNkSy35DHglvZkQ,,,,N,0,0,,,2014-04-13 07:21,2014-04-14 16:04,admin,admin,
2232,142329,6971,40263,7842,0,N,N,N,CP_Phys,TT_Task,DT_FixedDrtn,TK_NotStart,CZA-TK-0720-1540,Inspection,8376,2362,0,10,0,45.073292,45.073292,10,0,0,0,,,,2015-03-19 15:00,2015-03-21 15:00,,2014-06-17 13:00,2014-06-18 13:00,2014-06-17 13:00,2014-06-18 13:00,2014-06-17 13:00,2014-06-18 13:00,2015-03-19 15:00,2015-03-21 15:00,,PT_Normal,,,,,BDLetcByPEeGP1fpB2CNLQ,,,,N,0,0,,,2014-04-13 07:21,2014-04-14 16:04,admin,admin,
2233,142330,6971,40264,7842,0,N,N,N,CP_Phys,TT_Task,DT_FixedDrtn,TK_NotStart,CZA-TK-0720-1640,Laying and Fit-up,8376,2362,0,10,0,0,0,10,30,0,30,,,,2015-04-14 15:00,2015-04-15 15:00,,2014-07-13 13:00,2014-07-14 13:00,2014-07-13 13:00,2014-07-14 13:00,2014-07-13 13:00,2014-07-14 13:00,2015-04-14 15:00,2015-04-15 15:00,,PT_Normal,,,,,1yQ1m6OV90Wm1H6r0BT6Pg,,,,N,0,0,,,2014-04-13 07:21,2014-04-14 16:04,admin,admin,
2234,142331,6971,40264,7842,0,N,N,N,CP_Phys,TT_Task,DT_FixedDrtn,TK_NotStart,CZA-TK-0720-1650,Welding,8376,2362,0,60,0,0,0,60,180,0,180,,,,2015-04-15 15:00,2015-04-22 15:00,,2014-07-14 13:00,2014-07-21 13:00,2014-07-14 13:00,2014-07-21 13:00,2014-07-14 13:00,2014-07-21 13:00,2015-04-15 15:00,2015-04-22 15:00,,PT_Normal,,,,,sZes7q/gM0KgXYNcudbtyg,,,,N,0,0,,,2014-04-13 07:21,2014-04-14 16:04,admin,admin,
2235,142332,6971,40264,7842,0,N,N,N,CP_Phys,TT_Task,DT_FixedDrtn,TK_NotStart,CZA-TK-0720-1660,Inspection,8376,2362,0,70,0,0,0,70,0,0,0,,,,2015-04-14 15:00,2015-04-22 15:00,,2014-07-13 13:00,2014-07-21 13:00,2014-07-13 13:00,2014-07-21 13:00,2014-07-13 13:00,2014-07-21 13:00,2015-04-14 15:00,2015-04-22 15:00,,PT_Normal,,,,,Cpsi5iLB6Eqp9x3sDniDTQ,,,,N,0,0,,,2014-04-13 07:21,2014-04-14 16:04,admin,admin,
2236,142333,6971,40265,7842,0,N,N,N,CP_Phys,TT_Task,DT_FixedDrtn,TK_NotStart,CZA-TK-0720-1670,Installation and Fit-up,8376,2362,0,20,0,0,0,20,60,0,60,,,,2015-04-22 15:00,2015-04-25 15:00,,2014-07-21 13:00,2014-07-23 13:00,2014-07-21 13:00,2014-07-23 13:00,2014-07-21 13:00,2014-07-23 13:00,2015-04-22 15:00,2015-04-25 15:00,,PT_Normal,,,,,pkXrdGdfq0+mpbVLhPq9cg,,,,N,0,0,,,2014-04-13 07:21,2014-04-14 16:04,admin,admin,
2237,142334,6971,40265,7842,0,N,N,N,CP_Phys,TT_Task,DT_FixedDrtn,TK_NotStart,CZA-TK-0720-1680,Welding,8376,2362,0,30,0,0,0,30,90,0,90,,,,2015-04-25 15:00,2015-04-28 15:00,,2014-07-23 13:00,2014-07-27 13:00,2014-07-23 13:00,2014-07-27 13:00,2014-07-23 13:00,2014-07-27 13:00,2015-04-25 15:00,2015-04-28 15:00,,PT_Normal,,,,,aiJtf/CaiUa5MejRNpUrQw,,,,N,0,0,,,2014-04-13 07:21,2014-04-14 16:04,admin,admin,
2238,142335,6971,40265,7842,0,N,N,N,CP_Phys,TT_Task,DT_FixedDrtn,TK_NotStart,CZA-TK-0720-1690,Inspection,8376,2362,0,50,0,0,0,50,0,0,0,,,,2015-04-22 15:00,2015-04-28 15:00,,2014-07-21 13:00,2014-07-27 13:00,2014-07-21 13:00,2014-07-27 13:00,2014-07-21 13:00,2014-07-27 13:00,2015-04-22 15:00,2015-04-28 15:00,,PT_Normal,,,,,GYrt5dYOtUKDvRUsW6OXow,,,,N,0,0,,,2014-04-13 07:21,2014-04-14 16:04,admin,admin,
2239,142336,6971,40375,7842,0,N,N,N,CP_Phys,TT_Task,DT_FixedDrtn,TK_NotStart,CZA-TK-0720-1730,Erection and Fit-up,8376,2362,0,30,0,0,0,30,90,0,90,,,,2015-05-11 15:00,2015-05-14 15:00,,2014-08-09 13:00,2014-08-12 13:00,2014-08-09 13:00,2014-08-12 13:00,2014-08-09 13:00,2014-08-12 13:00,2015-05-11 15:00,2015-05-14 15:00,,PT_Normal,,,,,n/h8Qo7vvUiQFlepMYsgIQ,,,,N,0,0,,,2014-04-13 07:21,2014-04-14 16:04,admin,admin,
2240,142337,6971,40375,7842,0,N,N,N,CP_Phys,TT_Task,DT_FixedDrtn,TK_NotStart,CZA-TK-0720-1740,Welding,8376,2362,0,90,0,0,0,90,270,0,270,,,,2015-05-14 15:00,2015-05-25 15:00,,2014-08-12 13:00,2014-08-23 13:00,2014-08-12 13:00,2014-08-23 13:00,2014-08-12 13:00,2014-08-23 13:00,2015-05-14 15:00,2015-05-25 15:00,,PT_Normal,,,,,YJH2nnhZg0qxldFIo9AO/A,,,,N,0,0,,,2014-04-13 07:21,2014-04-14 16:04,admin,admin,
2241,142338,6971,40375,7842,0,N,N,N,CP_Phys,TT_Task,DT_FixedDrtn,TK_NotStart,CZA-TK-0720-1750,Inspection,8376,2362,0,120,0,0,0,120,0,0,0,,,,2015-05-11 15:00,2015-05-25 15:00,,2014-08-09 13:00,2014-08-23 13:00,2014-08-09 13:00,2014-08-23 13:00,2014-08-09 13:00,2014-08-23 13:00,2015-05-11 15:00,2015-05-25 15:00,,PT_Normal,,,,,fZRIlNy5fkOsPJzIpFbdog,,,,N,0,0,,,2014-04-13 07:21,2014-04-14 16:04,admin,admin,
2242,142339,6971,40267,7842,0,N,N,N,CP_Phys,TT_Task,DT_FixedDrtn,TK_NotStart,CZA-TK-0720-1180,Laying and Fit-up,8376,2362,0,10,0,223.737936,223.737936,10,30,0,30,,,,2014-12-15 15:00,2014-12-16 15:00,,2014-03-15 13:00,2014-03-16 13:00,2014-03-15 13:00,2014-03-16 13:00,2014-03-15 13:00,2014-03-16 13:00,2014-12-15 15:00,2014-12-16 15:00,,PT_Normal,,,,,aDNGlFyfcU+pNhy2TzNmrw,,,,N,0,0,,,2014-04-13 07:21,2014-04-14 16:04,admin,admin,
2243,142340,6971,40267,7842,0,N,N,N,CP_Phys,TT_Task,DT_FixedDrtn,TK_NotStart,CZA-TK-0720-1190,Welding,8376,2362,0,20,0,279.67242,279.67242,20,60,0,60,,,,2014-12-16 15:00,2014-12-18 15:00,,2014-03-16 13:00,2014-03-18 13:00,2014-03-16 13:00,2014-03-18 13:00,2014-03-16 13:00,2014-03-18 13:00,2014-12-16 15:00,2014-12-18 15:00,,PT_Normal,,,,,IklZvHo0gEmuf8yTsHvksQ,,,,N,0,0,,,2014-04-13 07:21,2014-04-14 16:04,admin,admin,
2244,142341,6971,40267,7842,0,N,N,N,CP_Phys,TT_Task,DT_FixedDrtn,TK_NotStart,CZA-TK-0720-1330,Inspection,8376,2362,0,30,0,55.934484,55.934484,30,0,0,0,,,,2014-12-15 15:00,2014-12-18 15:00,,2014-03-15 13:00,2014-03-18 13:00,2014-03-15 13:00,2014-03-18 13:00,2014-03-15 13:00,2014-03-18 13:00,2014-12-15 15:00,2014-12-18 15:00,,PT_Normal,,,,,1QWft2Vgdk+U6hpi7gr1+w,,,,N,0,0,,,2014-04-13 07:21,2014-04-14 16:04,admin,admin,
2245,142342,6971,40268,7842,0,N,N,N,CP_Phys,TT_Task,DT_FixedDrtn,TK_NotStart,CZA-TK-0720-1610,Laying and Fit-up,8376,2362,0,20,0,473.569526,473.569526,20,60,0,60,,,,2015-04-04 15:00,2015-04-06 15:00,,2014-07-02 13:00,2014-07-05 13:00,2014-07-02 13:00,2014-07-05 13:00,2014-07-02 13:00,2014-07-05 13:00,2015-04-04 15:00,2015-04-06 15:00,,PT_Normal,,,,,wOu0yyztOUCepSyd3loCJQ,,,,N,0,0,,,2014-04-13 07:21,2014-04-14 16:04,admin,admin,
2246,142343,6971,40268,7842,0,N,N,N,CP_Phys,TT_Task,DT_FixedDrtn,TK_NotStart,CZA-TK-0720-1620,Welding,8376,2362,0,70,0,591.961906,591.961906,70,210,0,210,,,,2015-04-06 15:00,2015-04-14 15:00,,2014-07-05 13:00,2014-07-13 13:00,2014-07-05 13:00,2014-07-13 13:00,2014-07-05 13:00,2014-07-13 13:00,2015-04-06 15:00,2015-04-14 15:00,,PT_Normal,,,,,SQFdeXX7WUSf+c2ZQn7DtA,,,,N,0,0,,,2014-04-13 07:21,2014-04-14 17:03,admin,admin,
2247,142344,6971,40268,7842,0,N,N,N,CP_Phys,TT_Task,DT_FixedDrtn,TK_NotStart,CZA-TK-0720-1630,Inspection,8376,2362,0,90,0,118.392382,118.392382,90,0,0,0,,,,2015-04-04 15:00,2015-04-14 15:00,,2014-07-02 13:00,2014-07-13 13:00,2014-07-02 13:00,2014-07-13 13:00,2014-07-02 13:00,2014-07-13 13:00,2015-04-04 15:00,2015-04-14 15:00,,PT_Normal,,,,,NNWrppS7aUygXcKq51yqsw,,,,N,0,0,,,2014-04-13 07:21,2014-04-14 17:03,admin,admin,
2248,142345,6971,40269,7842,0,N,N,N,CP_Phys,TT_Task,DT_FixedDrtn,TK_NotStart,CZA-TK-0720-1200,Erection and Fit-up,8376,2362,0,30,0,223.737936,223.737936,30,90,0,90,,,,2014-12-18 15:00,2014-12-22 15:00,,2014-03-18 13:00,2014-03-22 13:00,2014-03-18 13:00,2014-03-22 13:00,2014-03-18 13:00,2014-03-22 13:00,2014-12-18 15:00,2014-12-22 15:00,,PT_Normal,,,,,QuURFNeqkUeaNxJUzFi6JQ,,,,N,0,0,,,2014-04-13 07:21,2014-04-14 16:04,admin,admin,
2249,142346,6971,40269,7842,0,N,N,N,CP_Phys,TT_Task,DT_FixedDrtn,TK_NotStart,CZA-TK-0720-1210,Welding,8376,2362,0,70,0,279.67242,279.67242,70,210,0,210,,,,2014-12-22 15:00,2014-12-30 15:00,,2014-03-22 13:00,2014-03-30 13:00,2014-03-22 13:00,2014-03-30 13:00,2014-03-22 13:00,2014-03-30 13:00,2014-12-22 15:00,2014-12-30 15:00,,PT_Normal,,,,,Nmcgf/9pr0yxq4/DGuKZGw,,,,N,0,0,,,2014-04-13 07:21,2014-04-14 16:04,admin,admin,
2250,142347,6971,40269,7842,0,N,N,N,CP_Phys,TT_Task,DT_FixedDrtn,TK_NotStart,CZA-TK-0720-1220,Inspection,8376,2362,0,100,0,55.934484,55.934484,100,0,0,0,,,,2014-12-18 15:00,2014-12-30 15:00,,2014-03-18 13:00,2014-03-30 13:00,2014-03-18 13:00,2014-03-30 13:00,2014-03-18 13:00,2014-03-30 13:00,2014-12-18 15:00,2014-12-30 15:00,,PT_Normal,,,,,h/pyUV0gv0u4J//zBE4IbA,,,,N,0,0,,,2014-04-13 07:21,2014-04-14 16:04,admin,admin,
2251,142348,6971,40145,7842,0,N,N,N,CP_Phys,TT_Task,DT_FixedDrtn,TK_NotStart,CZA-TK-0720-1800,Installation of Primary and Secondary Seal,8376,2362,0,30,0,0,0,30,90,0,90,,,,2015-05-25 15:00,2015-05-28 15:00,,2014-08-23 13:00,2014-08-26 13:00,2014-08-23 13:00,2014-08-26 13:00,2014-08-23 13:00,2014-08-26 13:00,2015-05-25 15:00,2015-05-28 15:00,,PT_Normal,,,,,chnzhsaAjUuWa46qx3GZjA,,,,N,0,0,,,2014-04-13 07:21,2014-04-14 16:04,admin,admin,
2252,142349,6971,40145,7842,0,N,N,N,CP_Phys,TT_Task,DT_FixedDrtn,TK_NotStart,CZA-TK-0720-1810,Inspection,8376,2362,562,10,0,0,0,10,0,0,0,,,,2015-05-28 15:00,2015-05-30 15:00,,2014-08-26 13:00,2014-08-27 13:00,2014-08-26 13:00,2014-08-27 13:00,2014-08-26 13:00,2014-08-27 13:00,2015-05-28 15:00,2015-05-30 15:00,,PT_Normal,,,,,saO8I8AiRUChuSz4OFLLzw,,,,N,0,0,,,2014-04-13 07:21,2014-04-14 16:04,admin,admin,
2253,142350,6971,40271,7842,0,N,N,N,CP_Phys,TT_Task,DT_FixedDrtn,TK_NotStart,CZA-TK-0720-1260,Erection and Fit-up,8376,2362,0,10,0,231.644148,231.644148,10,30,0,30,,,,2015-01-06 15:00,2015-01-07 15:00,,2014-04-06 13:00,2014-04-07 13:00,2014-04-06 13:00,2014-04-07 13:00,2014-04-06 13:00,2014-04-07 13:00,2015-01-06 15:00,2015-01-07 15:00,,PT_Normal,,,,,fHLErs35kkqT9NxkkDnMZw,,,,N,0,0,,,2014-04-13 07:21,2014-04-14 17:03,admin,admin,
2254,142351,6971,40271,7842,0,N,N,N,CP_Phys,TT_Task,DT_FixedDrtn,TK_NotStart,CZA-TK-0720-1270,Welding,8376,2362,0,50,0,289.555186,289.555186,50,150,0,150,,,,2015-01-07 15:00,2015-01-13 15:00,,2014-04-07 13:00,2014-04-13 13:00,2014-04-07 13:00,2014-04-13 13:00,2014-04-07 13:00,2014-04-13 13:00,2015-01-07 15:00,2015-01-13 15:00,,PT_Normal,,,,,gFOxkbLBfEqhVqmjCQYtIw,,,,N,0,0,,,2014-04-13 07:21,2014-04-14 16:04,admin,admin,
2255,142352,6971,40271,7842,0,N,N,N,CP_Phys,TT_Task,DT_FixedDrtn,TK_NotStart,CZA-TK-0720-1280,Inspection,8376,2362,0,60,0,57.911038,57.911038,60,0,0,0,,,,2015-01-06 15:00,2015-01-13 15:00,,2014-04-06 13:00,2014-04-13 13:00,2014-04-06 13:00,2014-04-13 13:00,2014-04-06 13:00,2014-04-13 13:00,2015-01-06 15:00,2015-01-13 15:00,,PT_Normal,,,,,77AmE8x09UmB+FKQtEVAYw,,,,N,0,0,,,2014-04-13 07:21,2014-04-14 17:03,admin,admin,
2256,142353,6971,40272,7842,0,N,N,N,CP_Phys,TT_Task,DT_FixedDrtn,TK_NotStart,CZA-TK-0720-1290,"Cutting, Installation and Fit-up",8376,2362,0,10,0,34.641032,34.641032,10,30,0,30,,,,2015-01-13 15:00,2015-01-14 15:00,,2014-04-13 13:00,2014-04-14 13:00,2014-04-13 13:00,2014-04-14 13:00,2014-04-13 13:00,2014-04-14 13:00,2015-01-13 15:00,2015-01-14 15:00,,PT_Normal,,,,,K4BEya53B0W0HtjFnW+LVQ,,,,N,0,0,,,2014-04-13 07:21,2014-04-14 17:03,admin,admin,
2257,142354,6971,40272,7842,0,N,N,N,CP_Phys,TT_Task,DT_FixedDrtn,TK_NotStart,CZA-TK-0720-1300,Welding,8376,2362,0,30,0,43.301288,43.301288,30,90,0,90,,,,2015-01-14 15:00,2015-01-18 15:00,,2014-04-14 13:00,2014-04-17 13:00,2014-04-14 13:00,2014-04-17 13:00,2014-04-14 13:00,2014-04-17 13:00,2015-01-14 15:00,2015-01-18 15:00,,PT_Normal,,,,,z2mhJKe6RUCQuqSPFI+yJw,,,,N,0,0,,,2014-04-13 07:21,2014-04-14 17:03,admin,admin,
2258,142355,6971,40272,7842,0,N,N,N,CP_Phys,TT_Task,DT_FixedDrtn,TK_NotStart,CZA-TK-0720-1310,Inspection,8376,2362,0,40,0,8.660258,8.660258,40,0,0,0,,,,2015-01-13 15:00,2015-01-18 15:00,,2014-04-13 13:00,2014-04-17 13:00,2014-04-13 13:00,2014-04-17 13:00,2014-04-13 13:00,2014-04-17 13:00,2015-01-13 15:00,2015-01-18 15:00,,PT_Normal,,,,,P8mbZjMW8k6K2S409nyTUw,,,,N,0,0,,,2014-04-13 07:21,2014-04-14 16:04,admin,admin,
2259,142356,6971,39975,7842,0,N,N,N,CP_Phys,TT_Task,DT_FixedDrtn,TK_NotStart,CZA-TK-0725-2320,"Filling,Holding and Draining of Water",8381,1792,0,90,0,2398.458592,2398.458592,90,0,0,0,,,,2015-05-30 15:00,2015-06-09 15:00,,2014-11-02 13:00,2014-11-12 13:00,2014-11-02 13:00,2014-11-12 13:00,2014-11-02 13:00,2014-11-12 13:00,2015-05-30 15:00,2015-06-09 15:00,,PT_Normal,,,,,geeAIfqslEKBcsRUWEy8dA,GbK0zqMnbkyWAuO1if4/aw,,,N,0,0,,,2014-04-13 07:21,2014-04-14 16:04,admin,admin,
2260,142357,6971,40485,7842,0,N,N,N,CP_Phys,TT_Task,DT_FixedDrtn,TK_NotStart,CZA-TK-0725-1810,Laying & Fit-up,8381,2250,0,20,0,181.330036,181.330036,20,40,0,40,,,,2015-01-31 15:00,2015-02-02 15:00,,2014-05-13 15:00,2014-05-15 15:00,2014-05-13 15:00,2014-05-15 15:00,2014-05-13 15:00,2014-05-15 15:00,2015-01-31 15:00,2015-02-02 15:00,,PT_Normal,,,,,8687E876Skqd/tbyT2D3Hw,KssNPIm1jk+K2A5sKfz/0A,,,N,0,0,,,2014-04-13 07:21,2014-04-14 16:04,admin,admin,
2261,142358,6971,40485,7842,0,N,N,N,CP_Phys,TT_Task,DT_FixedDrtn,TK_NotStart,CZA-TK-0725-1830,Inspection,8381,2250,0,100,0,45.332509,45.332509,100,0,0,0,,,,2015-01-31 15:00,2015-02-11 15:00,,2014-05-13 15:00,2014-05-25 15:00,2014-05-13 15:00,2014-05-25 15:00,2014-05-13 15:00,2014-05-25 15:00,2015-01-31 15:00,2015-02-11 15:00,,PT_Normal,,,,,6hlwpVGhtUa4xPP5okyg+g,rQ2aH2W5tEWE1l2GduFY7A,,,N,0,0,,,2014-04-13 07:21,2014-04-14 16:04,admin,admin,
2262,142359,6971,40485,7842,0,N,N,N,CP_Phys,TT_Task,DT_FixedDrtn,TK_NotStart,CZA-TK-0725-1820,Welding,8381,2250,0,80,0,226.662545,226.662545,80,160,0,160,,,,2015-02-02 15:00,2015-02-11 15:00,,2014-05-15 15:00,2014-05-25 15:00,2014-05-15 15:00,2014-05-25 15:00,2014-05-15 15:00,2014-05-25 15:00,2015-02-02 15:00,2015-02-11 15:00,,PT_Normal,,,,,68CJwdZb0U6QaT50Sw1edw,dPx7ur5X4E68wCw4yWHMeA,,,N,0,0,,,2014-04-13 07:21,2014-04-14 16:04,admin,admin,
2263,142360,6971,40277,7842,0,N,N,N,CP_Phys,TT_Task,DT_FixedDrtn,TK_NotStart,CZA-TK-0725-2270,Erection and Fit-up,8381,2250,0,30,0,0,0,30,60,0,60,,,,2015-05-11 15:00,2015-05-14 15:00,,2014-08-21 15:00,2014-08-25 15:00,2014-08-21 15:00,2014-08-25 15:00,2014-08-21 15:00,2014-08-25 15:00,2015-05-11 15:00,2015-05-14 15:00,,PT_Normal,,,,,I78uo8mPWU+gzIVSKOE+wQ,DKEo/ibBLEySvEDQT8snLQ,,,N,0,0,,,2014-04-13 07:21,2014-04-14 16:04,admin,admin,
2264,142361,6971,40277,7842,0,N,N,N,CP_Phys,TT_Task,DT_FixedDrtn,TK_NotStart,CZA-TK-0725-2280,Welding,8381,2250,0,90,0,0,0,90,180,0,180,,,,2015-05-14 15:00,2015-05-25 15:00,,2014-08-25 15:00,2014-09-04 15:00,2014-08-25 15:00,2014-09-04 15:00,2014-08-25 15:00,2014-09-04 15:00,2015-05-14 15:00,2015-05-25 15:00,,PT_Normal,,,,,Syyx+x+jbkuf1uE/S3ZzSg,qRkvgRKmaUWOLjG6xvQh+Q,,,N,0,0,,,2014-04-13 07:21,2014-04-14 16:04,admin,admin,
2265,142362,6971,40277,7842,0,N,N,N,CP_Phys,TT_Task,DT_FixedDrtn,TK_NotStart,CZA-TK-0725-2290,Inspection,8381,2250,0,120,0,0,0,120,0,0,0,,,,2015-05-11 15:00,2015-05-25 15:00,,2014-08-21 15:00,2014-09-04 15:00,2014-08-21 15:00,2014-09-04 15:00,2014-08-21 15:00,2014-09-04 15:00,2015-05-11 15:00,2015-05-25 15:00,,PT_Normal,,,,,4Rn/eXaz6Um41WyOmo6JIg,GgO/xwUyZ0qNZDD5nEZPVQ,,,N,0,0,,,2014-04-13 07:21,2014-04-14 16:04,admin,admin,
2266,142363,6971,40278,7842,0,N,N,N,CP_Phys,TT_Task,DT_FixedDrtn,TK_NotStart,CZA-TK-0725-2180,Laying and Fit-up,8381,2250,0,20,0,0,0,20,40,0,40,,,,2015-04-11 15:00,2015-04-13 15:00,,2014-07-22 15:00,2014-07-24 15:00,2014-07-22 15:00,2014-07-24 15:00,2014-07-22 15:00,2014-07-24 15:00,2015-04-11 15:00,2015-04-13 15:00,,PT_Normal,,,,,zfeUWD0owU+d7FeHR06YPw,38rDDPsbtU6lg7401KsAhA,,,N,0,0,,,2014-04-13 07:21,2014-04-14 16:04,admin,admin,
2267,142364,6971,40278,7842,0,N,N,N,CP_Phys,TT_Task,DT_FixedDrtn,TK_NotStart,CZA-TK-0725-2190,Welding,8381,2250,0,40,0,0,0,40,80,0,80,,,,2015-04-13 15:00,2015-04-18 15:00,,2014-07-24 15:00,2014-07-29 15:00,2014-07-24 15:00,2014-07-29 15:00,2014-07-24 15:00,2014-07-29 15:00,2015-04-13 15:00,2015-04-18 15:00,,PT_Normal,,,,,nBAXoIOAWUiiWTY/sXFsjw,KI89ugmbZEK0feP4KzqiJQ,,,N,0,0,,,2014-04-13 07:21,2014-04-14 16:04,admin,admin,
2268,142365,6971,40278,7842,0,N,N,N,CP_Phys,TT_Task,DT_FixedDrtn,TK_NotStart,CZA-TK-0725-2200,Inspection,8381,2250,0,60,0,0,0,60,0,0,0,,,,2015-04-11 15:00,2015-04-18 15:00,,2014-07-22 15:00,2014-07-29 15:00,2014-07-22 15:00,2014-07-29 15:00,2014-07-22 15:00,2014-07-29 15:00,2015-04-11 15:00,2015-04-18 15:00,,PT_Normal,,,,,0TNZ7QOzC06k3BTCp8V9oQ,E6Lo4VBoC0yT1PYgOG2gmg,,,N,0,0,,,2014-04-13 07:21,2014-04-14 16:04,admin,admin,
2269,142366,6971,40279,7842,0,N,N,N,CP_Phys,TT_Task,DT_FixedDrtn,TK_NotStart,CZA-TK-0725-2120,Erection and Fit-up,8381,2250,0,30,0,111.73606,111.73606,30,60,0,60,,,,2015-03-24 15:00,2015-03-28 15:00,,2014-07-05 15:00,2014-07-08 15:00,2014-07-05 15:00,2014-07-08 15:00,2014-07-05 15:00,2014-07-08 15:00,2015-03-24 15:00,2015-03-28 15:00,,PT_Normal,,,,,+cxoV4kWDUyQ3ztXhXV5ng,3pPbWNz02ECXWFvlQXUUzw,,,N,0,0,,,2014-04-13 07:21,2014-04-14 16:04,admin,admin,
2270,142367,6971,40279,7842,0,N,N,N,CP_Phys,TT_Task,DT_FixedDrtn,TK_NotStart,CZA-TK-0725-2130,Welding,8381,2250,0,60,0,139.670074,139.670074,60,120,0,120,,,,2015-03-28 15:00,2015-04-04 15:00,,2014-07-08 15:00,2014-07-15 15:00,2014-07-08 15:00,2014-07-15 15:00,2014-07-08 15:00,2014-07-15 15:00,2015-03-28 15:00,2015-04-04 15:00,,PT_Normal,,,,,ObN8R4A8H0idgSUm05/ASQ,CMJVuBtxs0WpSvJMgYzpdQ,,,N,0,0,,,2014-04-13 07:21,2014-04-14 16:04,admin,admin,
2271,142368,6971,40279,7842,0,N,N,N,CP_Phys,TT_Task,DT_FixedDrtn,TK_NotStart,CZA-TK-0725-2140,Inspection,8381,2250,0,90,0,27.934015,27.934015,90,0,0,0,,,,2015-03-24 15:00,2015-04-04 15:00,,2014-07-05 15:00,2014-07-15 15:00,2014-07-05 15:00,2014-07-15 15:00,2014-07-05 15:00,2014-07-15 15:00,2015-03-24 15:00,2015-04-04 15:00,,PT_Normal,,,,,yaf92JWqHkGSndSuj86VUg,Edl0QwnUX0KIhV9WGm0FWg,,,N,0,0,,,2014-04-13 07:21,2014-04-14 16:04,admin,admin,
2272,142369,6971,40280,7842,0,N,N,N,CP_Phys,TT_Task,DT_FixedDrtn,TK_NotStart,CZA-TK-0725-2150,Laying and Fit-up,8381,2250,0,20,0,0,0,20,40,0,40,,,,2015-04-04 15:00,2015-04-06 15:00,,2014-07-15 15:00,2014-07-17 15:00,2014-07-15 15:00,2014-07-17 15:00,2014-07-15 15:00,2014-07-17 15:00,2015-04-04 15:00,2015-04-06 15:00,,PT_Normal,,,,,GXu8AbXVIkypqLbvaWf9XA,lqoLLr7/5kygFnKu35ZK/A,,,N,0,0,,,2014-04-13 07:21,2014-04-14 16:04,admin,admin,
2273,142370,6971,40280,7842,0,N,N,N,CP_Phys,TT_Task,DT_FixedDrtn,TK_NotStart,CZA-TK-0725-2160,Welding,8381,2250,0,40,0,0,0,40,80,0,80,,,,2015-04-06 15:00,2015-04-11 15:00,,2014-07-17 15:00,2014-07-22 15:00,2014-07-17 15:00,2014-07-22 15:00,2014-07-17 15:00,2014-07-22 15:00,2015-04-06 15:00,2015-04-11 15:00,,PT_Normal,,,,,s86oQSLy+k6RB4a/1Mhm5w,b1nZsMlO1kWoeCCjltwXCA,,,N,0,0,,,2014-04-13 07:21,2014-04-14 16:04,admin,admin,
2274,142371,6971,40280,7842,0,N,N,N,CP_Phys,TT_Task,DT_FixedDrtn,TK_NotStart,CZA-TK-0725-2170,Inspection,8381,2250,0,60,0,0,0,60,0,0,0,,,,2015-04-04 15:00,2015-04-11 15:00,,2014-07-15 15:00,2014-07-22 15:00,2014-07-15 15:00,2014-07-22 15:00,2014-07-15 15:00,2014-07-22 15:00,2015-04-04 15:00,2015-04-11 15:00,,PT_Normal,,,,,zCaQSUFG0U+StZDhsJZU+g,ZJLvsA/nKk2A1bYBYtNjEg,,,N,0,0,,,2014-04-13 07:21,2014-04-14 16:04,admin,admin,
2275,142372,6971,40281,7842,0,N,N,N,CP_Phys,TT_Task,DT_FixedDrtn,TK_NotStart,CZA-TK-0725-2210,Installation and Fit-up,8381,2250,0,20,0,0,0,20,40,0,40,,,,2015-04-18 15:00,2015-04-20 15:00,,2014-07-29 15:00,2014-07-31 15:00,2014-07-29 15:00,2014-07-31 15:00,2014-07-29 15:00,2014-07-31 15:00,2015-04-18 15:00,2015-04-20 15:00,,PT_Normal,,,,,T61FIDoGdkSPtumoZfo9sg,bD2aSVsRPUGwVgEu44Yb3g,,,N,0,0,,,2014-04-13 07:21,2014-04-14 16:04,admin,admin,
2276,142373,6971,40281,7842,0,N,N,N,CP_Phys,TT_Task,DT_FixedDrtn,TK_NotStart,CZA-TK-0725-2220,Welding,8381,2250,0,30,0,0,0,30,60,0,60,,,,2015-04-20 15:00,2015-04-23 15:00,,2014-07-31 15:00,2014-08-04 15:00,2014-07-31 15:00,2014-08-04 15:00,2014-07-31 15:00,2014-08-04 15:00,2015-04-20 15:00,2015-04-23 15:00,,PT_Normal,,,,,/vcyjRbKOEalRyb4ZH64Eg,GxHnLl5VIkuOEAgeAd9eOA,,,N,0,0,,,2014-04-13 07:21,2014-04-14 16:04,admin,admin,
2277,142374,6971,40281,7842,0,N,N,N,CP_Phys,TT_Task,DT_FixedDrtn,TK_NotStart,CZA-TK-0725-2230,Inspection,8381,2250,0,50,0,0,0,50,0,0,0,,,,2015-04-18 15:00,2015-04-23 15:00,,2014-07-29 15:00,2014-08-04 15:00,2014-07-29 15:00,2014-08-04 15:00,2014-07-29 15:00,2014-08-04 15:00,2015-04-18 15:00,2015-04-23 15:00,,PT_Normal,,,,,hG6HRcSWtkmAfG7dBf+28g,M+mAsAseME6UwHJ2LqieAg,,,N,0,0,,,2014-04-13 07:21,2014-04-14 16:04,admin,admin,
2278,142375,6971,40391,7842,0,N,N,N,CP_Phys,TT_Task,DT_FixedDrtn,TK_NotStart,CZA-TK-0725-1660,Laying and Fit-up,8381,2250,0,10,0,73.966427,73.966427,10,20,0,20,,,,2015-01-03 15:00,2015-01-04 15:00,,2014-04-15 15:00,2014-04-16 15:00,2014-04-15 15:00,2014-04-16 15:00,2014-04-15 15:00,2014-04-16 15:00,2015-01-03 15:00,2015-01-04 15:00,,PT_Normal,,,,,NAqGHGiC5kOFhQ67KWMZqA,4xTzSv5K0UyQPVgnB+HAyQ,,,N,0,0,,,2014-04-13 07:21,2014-04-14 16:04,admin,admin,
2279,142376,6971,40391,7842,0,N,N,N,CP_Phys,TT_Task,DT_FixedDrtn,TK_NotStart,CZA-TK-0725-1670,Welding,8381,2250,0,20,0,92.458034,92.458034,20,40,0,40,,,,2015-01-04 15:00,2015-01-06 15:00,,2014-04-16 15:00,2014-04-19 15:00,2014-04-16 15:00,2014-04-19 15:00,2014-04-16 15:00,2014-04-19 15:00,2015-01-04 15:00,2015-01-06 15:00,,PT_Normal,,,,,VHsFvx8wQ0uRW5l9kRvWTQ,OW51u38iqkm01dl5+RGrXg,,,N,0,0,,,2014-04-13 07:21,2014-04-14 16:04,admin,admin,
2280,142377,6971,40391,7842,0,N,N,N,CP_Phys,TT_Task,DT_FixedDrtn,TK_NotStart,CZA-TK-0725-1680,Inspection,8381,2250,0,30,0,18.491607,18.491607,30,0,0,0,,,,2015-01-03 15:00,2015-01-06 15:00,,2014-04-15 15:00,2014-04-19 15:00,2014-04-15 15:00,2014-04-19 15:00,2014-04-15 15:00,2014-04-19 15:00,2015-01-03 15:00,2015-01-06 15:00,,PT_Normal,,,,,VCpXXabjxEqJY48uKU06pQ,zRDtiWMtNk+np2JjmFCiyg,,,N,0,0,,,2014-04-13 07:21,2014-04-14 16:04,admin,admin,
2281,142378,6971,40183,7842,0,N,N,N,CP_Phys,TT_Task,DT_FixedDrtn,TK_NotStart,CZA-TK-0725-1690,Erection and Fit-up,8381,2250,0,20,0,114.873854,114.873854,20,40,0,40,,,,2015-01-06 15:00,2015-01-08 15:00,,2014-04-19 15:00,2014-04-21 15:00,2014-04-19 15:00,2014-04-21 15:00,2014-04-19 15:00,2014-04-21 15:00,2015-01-06 15:00,2015-01-08 15:00,,PT_Normal,,,,,ruK/3mW3A0G2vA+DDK5JpQ,q7RfwT5gj0+bXOv0QjWgPw,,,N,0,0,,,2014-04-13 07:21,2014-04-14 16:04,admin,admin,
2282,142379,6971,40183,7842,0,N,N,N,CP_Phys,TT_Task,DT_FixedDrtn,TK_NotStart,CZA-TK-0725-1700,Welding,8381,2250,0,40,0,143.592318,143.592318,40,80,0,80,,,,2015-01-08 15:00,2015-01-13 15:00,,2014-04-21 15:00,2014-04-26 15:00,2014-04-21 15:00,2014-04-26 15:00,2014-04-21 15:00,2014-04-26 15:00,2015-01-08 15:00,2015-01-13 15:00,,PT_Normal,,,,,oqBdZgOGTkeyA6EmpDxkMA,1PKmJY62FkK4Sk+s0nSOIA,,,N,0,0,,,2014-04-13 07:21,2014-04-14 16:04,admin,admin,
2283,142380,6971,40183,7842,0,N,N,N,CP_Phys,TT_Task,DT_FixedDrtn,TK_NotStart,CZA-TK-0725-1710,Inspection,8381,2250,0,60,0,28.718464,28.718464,60,0,0,0,,,,2015-01-06 15:00,2015-01-13 15:00,,2014-04-19 15:00,2014-04-26 15:00,2014-04-19 15:00,2014-04-26 15:00,2014-04-19 15:00,2014-04-26 15:00,2015-01-06 15:00,2015-01-13 15:00,,PT_Normal,,,,,Q13kK2F5I0WZGfnh1C/4Sw,i3kVVkgssE60CyweqM/fjQ,,,N,0,0,,,2014-04-13 07:21,2014-04-14 16:04,admin,admin,
2284,142381,6971,40184,7842,0,N,N,N,CP_Phys,TT_Task,DT_FixedDrtn,TK_NotStart,CZA-TK-0725-2240,Erection and Fit-up,8381,2250,0,40,0,0,0,40,80,0,80,,,,2015-04-23 15:00,2015-04-28 15:00,,2014-08-04 15:00,2014-08-09 15:00,2014-08-04 15:00,2014-08-09 15:00,2014-08-04 15:00,2014-08-09 15:00,2015-04-23 15:00,2015-04-28 15:00,,PT_Normal,,,,,Eq6VMwncT0W/6rXDGlmVLg,xISvkONOLUeuW4e6JAtS5g,,,N,0,0,,,2014-04-13 07:21,2014-04-14 16:04,admin,admin,
2285,142382,6971,40184,7842,0,N,N,N,CP_Phys,TT_Task,DT_FixedDrtn,TK_NotStart,CZA-TK-0725-2250,Welding,8381,2250,0,110,0,0,0,110,220,0,220,,,,2015-04-28 15:00,2015-05-11 15:00,,2014-08-09 15:00,2014-08-21 15:00,2014-08-09 15:00,2014-08-21 15:00,2014-08-09 15:00,2014-08-21 15:00,2015-04-28 15:00,2015-05-11 15:00,,PT_Normal,,,,,iXIJJZduEUKWFh2C4HlMYw,FHRY9Pkt6keAe1jb8Uv9Iw,,,N,0,0,,,2014-04-13 07:21,2014-04-14 16:04,admin,admin,
2286,142383,6971,40184,7842,0,N,N,N,CP_Phys,TT_Task,DT_FixedDrtn,TK_NotStart,CZA-TK-0725-2260,Inspection,8381,2250,0,150,0,0,0,150,0,0,0,,,,2015-04-23 15:00,2015-05-11 15:00,,2014-08-04 15:00,2014-08-21 15:00,2014-08-04 15:00,2014-08-21 15:00,2014-08-04 15:00,2014-08-21 15:00,2015-04-23 15:00,2015-05-11 15:00,,PT_Normal,,,,,0n11/xNMtUCI2FQM6vrnpQ,3A/uUzchU0qqxttIh1oVVg,,,N,0,0,,,2014-04-13 07:21,2014-04-14 16:04,admin,admin,
2287,142384,6971,40185,7842,0,N,N,N,CP_Phys,TT_Task,DT_FixedDrtn,TK_NotStart,CZA-TK-0725-2000,Erection and Fit-up,8381,2250,0,10,0,90.278704,90.278704,10,20,0,20,,,,2015-02-28 15:00,2015-03-01 15:00,,2014-06-10 15:00,2014-06-11 15:00,2014-06-10 15:00,2014-06-11 15:00,2014-06-10 15:00,2014-06-11 15:00,2015-02-28 15:00,2015-03-01 15:00,,PT_Normal,,,,,QO087Ij1AkmufrP1sOcSNw,8r5M3o8SgEWes50CefLAQw,,,N,0,0,,,2014-04-13 07:21,2014-04-14 16:04,admin,admin,
2288,142385,6971,40185,7842,0,N,N,N,CP_Phys,TT_Task,DT_FixedDrtn,TK_NotStart,CZA-TK-0725-2010,Welding,8381,2250,0,40,0,112.84838,112.84838,40,80,0,80,,,,2015-03-01 15:00,2015-03-05 15:00,,2014-06-11 15:00,2014-06-16 15:00,2014-06-11 15:00,2014-06-16 15:00,2014-06-11 15:00,2014-06-16 15:00,2015-03-01 15:00,2015-03-05 15:00,,PT_Normal,,,,,D9sQbfUPZEKht5fk/jDnqQ,6lxKm5MuVUubbRaj10fOxQ,,,N,0,0,,,2014-04-13 07:21,2014-04-14 16:04,admin,admin,
2289,142386,6971,40185,7842,0,N,N,N,CP_Phys,TT_Task,DT_FixedDrtn,TK_NotStart,CZA-TK-0725-2020,Inspection,8381,2250,0,50,0,22.569676,22.569676,50,0,0,0,,,,2015-02-28 15:00,2015-03-05 15:00,,2014-06-10 15:00,2014-06-16 15:00,2014-06-10 15:00,2014-06-16 15:00,2014-06-10 15:00,2014-06-16 15:00,2015-02-28 15:00,2015-03-05 15:00,,PT_Normal,,,,,CNHPm9BN2U6Cxdtxa5YDCg,XZexYUQK40m24xI/AXFP6g,,,N,0,0,,,2014-04-13 07:21,2014-04-14 16:04,admin,admin,
2290,142387,6971,40186,7842,0,N,N,N,CP_Phys,TT_Task,DT_FixedDrtn,TK_NotStart,CZA-TK-0725-2030,Erection and Fit-up,8381,2250,0,10,0,18.806805,18.806805,10,20,0,20,,,,2015-03-05 15:00,2015-03-07 15:00,,2014-06-16 15:00,2014-06-17 15:00,2014-06-16 15:00,2014-06-17 15:00,2014-06-16 15:00,2014-06-17 15:00,2015-03-05 15:00,2015-03-07 15:00,,PT_Normal,,,,,CsrhRUQ8oke4s/E2KdJ8hw,ntaVY//C7EWSowKzw2M/Sw,,,N,0,0,,,2014-04-13 07:21,2014-04-14 16:04,admin,admin,
2291,142388,6971,40186,7842,0,N,N,N,CP_Phys,TT_Task,DT_FixedDrtn,TK_NotStart,CZA-TK-0725-2040,Welding,8381,2250,0,40,0,23.508506,23.508506,40,80,0,80,,,,2015-03-07 15:00,2015-03-11 15:00,,2014-06-17 15:00,2014-06-22 15:00,2014-06-17 15:00,2014-06-22 15:00,2014-06-17 15:00,2014-06-22 15:00,2015-03-07 15:00,2015-03-11 15:00,,PT_Normal,,,,,pAefdYgV8UGF6GyrSbRPxQ,WjufB/43/0uh+CHEmNd6Ug,,,N,0,0,,,2014-04-13 07:21,2014-04-14 16:04,admin,admin,
2292,142389,6971,40186,7842,0,N,N,N,CP_Phys,TT_Task,DT_FixedDrtn,TK_NotStart,CZA-TK-0725-2050,Inspection,8381,2250,0,50,0,4.701701,4.701701,50,0,0,0,,,,2015-03-05 15:00,2015-03-11 15:00,,2014-06-16 15:00,2014-06-22 15:00,2014-06-16 15:00,2014-06-22 15:00,2014-06-16 15:00,2014-06-22 15:00,2015-03-05 15:00,2015-03-11 15:00,,PT_Normal,,,,,f01PnSKu80KVHCvEwSM9eA,nnGKkivXPkKw2oUYJvxWUA,,,N,0,0,,,2014-04-13 07:21,2014-04-14 16:04,admin,admin,
2293,142390,6971,40287,7842,0,N,N,N,CP_Phys,TT_Task,DT_FixedDrtn,TK_NotStart,CZA-TK-0725-2090,"Cutting, Installation and Fit-up",8381,2250,0,20,0,0,0,20,40,0,40,,,,2015-03-17 15:00,2015-03-19 15:00,,2014-06-28 15:00,2014-06-30 15:00,2014-06-28 15:00,2014-06-30 15:00,2014-06-28 15:00,2014-06-30 15:00,2015-03-17 15:00,2015-03-19 15:00,,PT_Normal,,,,,3eqWzfKwz0C7fIsVSSkP9w,7q99gx9bQkedYBiQ32ZKRw,,,N,0,0,,,2014-04-13 07:21,2014-04-14 16:04,admin,admin,
2294,142391,6971,40287,7842,0,N,N,N,CP_Phys,TT_Task,DT_FixedDrtn,TK_NotStart,CZA-TK-0725-2100,Welding,8381,2250,0,40,0,0,0,40,80,0,80,,,,2015-03-19 15:00,2015-03-24 15:00,,2014-06-30 15:00,2014-07-05 15:00,2014-06-30 15:00,2014-07-05 15:00,2014-06-30 15:00,2014-07-05 15:00,2015-03-19 15:00,2015-03-24 15:00,,PT_Normal,,,,,5jgmOfbCOEuxRtu1FaRlmw,w2Rp5z2q6kmvl7ZfKfB6Lw,,,N,0,0,,,2014-04-13 07:21,2014-04-14 16:04,admin,admin,
2295,142392,6971,40287,7842,0,N,N,N,CP_Phys,TT_Task,DT_FixedDrtn,TK_NotStart,CZA-TK-0725-2110,Inspection,8381,2250,0,60,0,0,0,60,0,0,0,,,,2015-03-17 15:00,2015-03-24 15:00,,2014-06-28 15:00,2014-07-05 15:00,2014-06-28 15:00,2014-07-05 15:00,2014-06-28 15:00,2014-07-05 15:00,2015-03-17 15:00,2015-03-24 15:00,,PT_Normal,,,,,yJdw1qMgU02CqPk5eWRcMQ,WOlW76z3mUq2ZTH1+reU/Q,,,N,0,0,,,2014-04-13 07:21,2014-04-14 16:04,admin,admin,
2296,142393,6971,40288,7842,0,N,N,N,CP_Phys,TT_Task,DT_FixedDrtn,TK_NotStart,CZA-TK-0725-2060,Erection and Fit-up,8381,2250,0,10,0,77.065873,77.065873,10,20,0,20,,,,2015-03-11 15:00,2015-03-12 15:00,,2014-06-22 15:00,2014-06-23 15:00,2014-06-22 15:00,2014-06-23 15:00,2014-06-22 15:00,2014-06-23 15:00,2015-03-11 15:00,2015-03-12 15:00,,PT_Normal,,,,,4mEvjDgdR0yAfR1m8CSleg,3j5R7vJWHE2lsvhxu9yzeQ,,,N,0,0,,,2014-04-13 07:21,2014-04-14 16:04,admin,admin,
2297,142394,6971,40288,7842,0,N,N,N,CP_Phys,TT_Task,DT_FixedDrtn,TK_NotStart,CZA-TK-0725-2070,Welding,8381,2250,0,40,0,96.332341,96.332341,40,80,0,80,,,,2015-03-12 15:00,2015-03-17 15:00,,2014-06-23 15:00,2014-06-28 15:00,2014-06-23 15:00,2014-06-28 15:00,2014-06-23 15:00,2014-06-28 15:00,2015-03-12 15:00,2015-03-17 15:00,,PT_Normal,,,,,bxrA1znJS0yM3yp/duRgtw,+JfCWsS/gEyxyOC7ISKlyA,,,N,0,0,,,2014-04-13 07:21,2014-04-14 16:04,admin,admin,
2298,142395,6971,40288,7842,0,N,N,N,CP_Phys,TT_Task,DT_FixedDrtn,TK_NotStart,CZA-TK-0725-2080,Inspection,8381,2250,0,50,0,19.266468,19.266468,50,0,0,0,,,,2015-03-11 15:00,2015-03-17 15:00,,2014-06-22 15:00,2014-06-28 15:00,2014-06-22 15:00,2014-06-28 15:00,2014-06-22 15:00,2014-06-28 15:00,2015-03-11 15:00,2015-03-17 15:00,,PT_Normal,,,,,k4ZE6OmQv0CyFA77uhw33w,0tqGML6JrkWM0sBR6jSZTQ,,,N,0,0,,,2014-04-13 07:21,2014-04-14 16:04,admin,admin,
2299,142396,6971,40289,7842,0,N,N,N,CP_Phys,TT_Task,DT_FixedDrtn,TK_NotStart,CZA-TK-0725-1840,"Cutting of All Holes, Laying & Fit-up",8381,2250,0,20,0,74.363314,74.363314,20,40,0,40,,,,2015-02-11 15:00,2015-02-14 15:00,,2014-05-25 15:00,2014-05-27 15:00,2014-05-25 15:00,2014-05-27 15:00,2014-05-25 15:00,2014-05-27 15:00,2015-02-11 15:00,2015-02-14 15:00,,PT_Normal,,,,,RJT+wZQV5065eEEW01TR3Q,JTuM26P3g0ucrKgrFjf2jA,,,N,0,0,,,2014-04-13 07:21,2014-04-14 16:04,admin,admin,
2300,142397,6971,40289,7842,0,N,N,N,CP_Phys,TT_Task,DT_FixedDrtn,TK_NotStart,CZA-TK-0725-1850,Welding of Sleeves and Plates,8381,2250,0,60,0,92.954142,92.954142,60,120,0,120,,,,2015-02-14 15:00,2015-02-21 15:00,,2014-05-27 15:00,2014-06-03 15:00,2014-05-27 15:00,2014-06-03 15:00,2014-05-27 15:00,2014-06-03 15:00,2015-02-14 15:00,2015-02-21 15:00,,PT_Normal,,,,,7tTF4PwBL0aVR06O1R/uvQ,rbefhaYsoUKKd3Egft+02w,,,N,0,0,,,2014-04-13 07:21,2014-04-14 16:04,admin,admin,
2301,142398,6971,40289,7842,0,N,N,N,CP_Phys,TT_Task,DT_FixedDrtn,TK_NotStart,CZA-TK-0725-1860,Installation of Leg Support,8381,2250,0,10,0,9.295414,9.295414,10,0,0,0,,,,2015-02-21 15:00,2015-02-22 15:00,,2014-06-03 15:00,2014-06-04 15:00,2014-06-03 15:00,2014-06-04 15:00,2014-06-03 15:00,2014-06-04 15:00,2015-02-21 15:00,2015-02-22 15:00,,PT_Normal,,,,,AAMt8+cTkUibp3LisU8d1Q,rKzt6vLqCUOW8OuBiNh8cA,,,N,0,0,,,2014-04-13 07:21,2014-04-14 16:04,admin,admin,
2302,142399,6971,40289,7842,0,N,N,N,CP_Phys,TT_Task,DT_FixedDrtn,TK_NotStart,CZA-TK-0725-1870,Inspection,8381,2250,0,90,0,9.295414,9.295414,90,0,0,0,,,,2015-02-11 15:00,2015-02-22 15:00,,2014-05-25 15:00,2014-06-04 15:00,2014-05-25 15:00,2014-06-04 15:00,2014-05-25 15:00,2014-06-04 15:00,2015-02-11 15:00,2015-02-22 15:00,,PT_Normal,,,,,913dmBNVKEeWjtaF9hV3jA,GjMNeeR2OUKlTE4N5V1gVg,,,N,0,0,,,2014-04-13 07:21,2014-04-14 16:04,admin,admin,
2303,142400,6971,40290,7842,0,N,N,N,CP_Phys,TT_Task,DT_FixedDrtn,TK_NotStart,CZA-TK-0725-1880,Erection and Fit-up,8381,2250,0,10,0,90.278704,90.278704,10,20,0,20,,,,2015-02-22 15:00,2015-02-23 15:00,,2014-06-04 15:00,2014-06-05 15:00,2014-06-04 15:00,2014-06-05 15:00,2014-06-04 15:00,2014-06-05 15:00,2015-02-22 15:00,2015-02-23 15:00,,PT_Normal,,,,,J9FTotxBrUOplS1E9HFuHA,OyYqmoNg3kCd/8AHOdH+cw,,,N,0,0,,,2014-04-13 07:21,2014-04-14 16:04,admin,admin,
2304,142401,6971,40290,7842,0,N,N,N,CP_Phys,TT_Task,DT_FixedDrtn,TK_NotStart,CZA-TK-0725-1890,Welding,8381,2250,0,40,0,112.84838,112.84838,40,80,0,80,,,,2015-02-23 15:00,2015-02-28 15:00,,2014-06-05 15:00,2014-06-10 15:00,2014-06-05 15:00,2014-06-10 15:00,2014-06-05 15:00,2014-06-10 15:00,2015-02-23 15:00,2015-02-28 15:00,,PT_Normal,,,,,MzEVK/6d/UCp+jiJlgLMkA,c5+O/Cg18U+uY0jLxWo4Sg,,,N,0,0,,,2014-04-13 07:21,2014-04-14 16:04,admin,admin,
2305,142402,6971,40290,7842,0,N,N,N,CP_Phys,TT_Task,DT_FixedDrtn,TK_NotStart,CZA-TK-0725-1900,Inspection,8381,2250,0,50,0,22.569676,22.569676,50,0,0,0,,,,2015-02-22 15:00,2015-02-28 15:00,,2014-06-04 15:00,2014-06-10 15:00,2014-06-04 15:00,2014-06-10 15:00,2014-06-04 15:00,2014-06-10 15:00,2015-02-22 15:00,2015-02-28 15:00,,PT_Normal,,,,,+gWtDomRdkqbpYC+4nqqSw,wEgU1yksi0GIsFsZWIWpMA,,,N,0,0,,,2014-04-13 07:21,2014-04-14 16:04,admin,admin,
2306,142403,6971,40291,7842,0,N,N,N,CP_Phys,TT_Task,DT_FixedDrtn,TK_NotStart,CZA-TK-0725-2300,Installation of Primary and Secondary Seal,8381,2250,0,30,0,0,0,30,0,0,0,,,,2015-05-25 15:00,2015-05-28 15:00,,2014-09-04 15:00,2014-09-08 15:00,2014-09-04 15:00,2014-09-08 15:00,2014-09-04 15:00,2014-09-08 15:00,2015-05-25 15:00,2015-05-28 15:00,,PT_Normal,,,,,NDhE3THQCE+Pf/AvjjYB8A,cquuRxOC5kCGXP3THseniA,,,N,0,0,,,2014-04-13 07:21,2014-04-14 16:04,admin,admin,
2307,142404,6971,40291,7842,0,N,N,N,CP_Phys,TT_Task,DT_FixedDrtn,TK_NotStart,CZA-TK-0725-2310,Inspection,8381,2250,458,10,0,0,0,10,0,0,0,,,,2015-05-28 15:00,2015-05-30 15:00,,2014-09-08 15:00,2014-09-09 15:00,2014-09-08 15:00,2014-09-09 15:00,2014-09-08 15:00,2014-09-09 15:00,2015-05-28 15:00,2015-05-30 15:00,,PT_Normal,,,,,CmyXMjI0yU+cOSFMxY0XCg,FY8q/Zdqx0SplbZ4Oay9IQ,,,N,0,0,,,2014-04-13 07:21,2014-04-14 16:04,admin,admin,
2308,142405,6971,40233,7842,0,N,N,N,CP_Phys,TT_Task,DT_FixedDrtn,TK_NotStart,CZA-TK-0725-1720,Erection and Fit-up,8381,2250,0,10,0,105.328613,105.328613,10,20,0,20,,,,2015-01-13 15:00,2015-01-14 15:00,,2014-04-26 15:00,2014-04-27 15:00,2014-04-26 15:00,2014-04-27 15:00,2014-04-26 15:00,2014-04-27 15:00,2015-01-13 15:00,2015-01-14 15:00,,PT_Normal,,,,,2Ou9jhXJQkCoz84477bkqA,NEEiURzJI0CFEUyx6dxh6A,,,N,0,0,,,2014-04-13 07:21,2014-04-14 16:04,admin,admin,
2309,142406,6971,40233,7842,0,N,N,N,CP_Phys,TT_Task,DT_FixedDrtn,TK_NotStart,CZA-TK-0725-1730,Welding,8381,2250,0,40,0,131.660766,131.660766,40,80,0,80,,,,2015-01-14 15:00,2015-01-19 15:00,,2014-04-27 15:00,2014-05-01 15:00,2014-04-27 15:00,2014-05-01 15:00,2014-04-27 15:00,2014-05-01 15:00,2015-01-14 15:00,2015-01-19 15:00,,PT_Normal,,,,,iJJyDynV3kCRYFb3HHbsDg,z5y9eV53sUCMdYSrzXL80Q,,,N,0,0,,,2014-04-13 07:21,2014-04-14 16:04,admin,admin,
2310,142407,6971,40233,7842,0,N,N,N,CP_Phys,TT_Task,DT_FixedDrtn,TK_NotStart,CZA-TK-0725-1740,Inspection,8381,2250,0,50,0,26.332153,26.332153,50,0,0,0,,,,2015-01-13 15:00,2015-01-19 15:00,,2014-04-26 15:00,2014-05-01 15:00,2014-04-26 15:00,2014-05-01 15:00,2014-04-26 15:00,2014-05-01 15:00,2015-01-13 15:00,2015-01-19 15:00,,PT_Normal,,,,,QfWlW6Cvdk6Vr7bgHg0sBg,8yU61xoZ90usS8LAsZK7ow,,,N,0,0,,,2014-04-13 07:21,2014-04-14 16:04,admin,admin,
2311,142408,6971,40234,7842,0,N,N,N,CP_Phys,TT_Task,DT_FixedDrtn,TK_NotStart,CZA-TK-0725-1750,Erection and Fit-up,8381,2250,0,10,0,90.278704,90.278704,10,20,0,20,,,,2015-01-19 15:00,2015-01-20 15:00,,2014-05-01 15:00,2014-05-03 15:00,2014-05-01 15:00,2014-05-03 15:00,2014-05-01 15:00,2014-05-03 15:00,2015-01-19 15:00,2015-01-20 15:00,,PT_Normal,,,,,hY5zEkPWb0WaxCuLRJQXHg,1fLtOkID4USsoZiOMIoLqA,,,N,0,0,,,2014-04-13 07:21,2014-04-14 16:04,admin,admin,
2312,142409,6971,40234,7842,0,N,N,N,CP_Phys,TT_Task,DT_FixedDrtn,TK_NotStart,CZA-TK-0725-1760,Welding,8381,2250,0,40,0,112.84838,112.84838,40,80,0,80,,,,2015-01-20 15:00,2015-01-25 15:00,,2014-05-03 15:00,2014-05-07 15:00,2014-05-03 15:00,2014-05-07 15:00,2014-05-03 15:00,2014-05-07 15:00,2015-01-20 15:00,2015-01-25 15:00,,PT_Normal,,,,,Q8wdcG4Hzk2swBQrcyt7Eg,3RILvsatokSR2cgMkZxFJQ,,,N,0,0,,,2014-04-13 07:21,2014-04-14 16:04,admin,admin,
2313,142410,6971,40234,7842,0,N,N,N,CP_Phys,TT_Task,DT_FixedDrtn,TK_NotStart,CZA-TK-0725-1770,Inspection,8381,2250,0,50,0,22.569676,22.569676,50,0,0,0,,,,2015-01-19 15:00,2015-01-25 15:00,,2014-05-01 15:00,2014-05-07 15:00,2014-05-01 15:00,2014-05-07 15:00,2014-05-01 15:00,2014-05-07 15:00,2015-01-19 15:00,2015-01-25 15:00,,PT_Normal,,,,,mOAjqYjcPEGlWrodKkt3xg,n0S4TbPN6EOJ6Xq2ln0XPw,,,N,0,0,,,2014-04-13 07:21,2014-04-14 16:04,admin,admin,
2314,142411,6971,40167,7842,0,N,N,N,CP_Phys,TT_Task,DT_FixedDrtn,TK_NotStart,CZA-TK-0725-1780,"Cutting, Installation and Fit-up",8381,2250,0,20,0,0,0,20,40,0,40,,,,2015-01-25 15:00,2015-01-27 15:00,,2014-05-07 15:00,2014-05-10 15:00,2014-05-07 15:00,2014-05-10 15:00,2014-05-07 15:00,2014-05-10 15:00,2015-01-25 15:00,2015-01-27 15:00,,PT_Normal,,,,,0eWW/wMLcUGPmBKLXl+KCA,xfWZSykn9US3GCleI+x61Q,,,N,0,0,,,2014-04-13 07:21,2014-04-14 16:04,admin,admin,
2315,142412,6971,40167,7842,0,N,N,N,CP_Phys,TT_Task,DT_FixedDrtn,TK_NotStart,CZA-TK-0725-1790,Welding,8381,2250,0,30,0,0,0,30,60,0,60,,,,2015-01-27 15:00,2015-01-31 15:00,,2014-05-10 15:00,2014-05-13 15:00,2014-05-10 15:00,2014-05-13 15:00,2014-05-10 15:00,2014-05-13 15:00,2015-01-27 15:00,2015-01-31 15:00,,PT_Normal,,,,,be/Lt93I8Ei0FLY/T1byjg,F+Y8OJbxoUKYpnHXQKiR0Q,,,N,0,0,,,2014-04-13 07:21,2014-04-14 16:04,admin,admin,
2316,142413,6971,40167,7842,0,N,N,N,CP_Phys,TT_Task,DT_FixedDrtn,TK_NotStart,CZA-TK-0725-1800,Inspection,8381,2250,0,50,0,0,0,50,0,0,0,,,,2015-01-25 15:00,2015-01-31 15:00,,2014-05-07 15:00,2014-05-13 15:00,2014-05-07 15:00,2014-05-13 15:00,2014-05-07 15:00,2014-05-13 15:00,2015-01-25 15:00,2015-01-31 15:00,,PT_Normal,,,,,a65x3gjIBkGb7+ko+kAEsg,0zfzSYhqLUqZ0HE8w1+biA,,,N,0,0,,,2014-04-13 07:21,2014-04-14 16:04,admin,admin,
2317,142414,6971,40086,7842,0,N,N,N,CP_Phys,TT_Task,DT_FixedDrtn,TK_NotStart,CZA-TK-0725-2330,"Blasting and Painting of Bottom, Shell and Roof (Inside and Outside)",8381,1792,0,90,0,1439.075155,1439.075155,90,0,0,0,,,,2015-06-09 15:00,2015-06-20 15:00,,2014-11-12 13:00,2014-11-23 13:00,2014-11-12 13:00,2014-11-23 13:00,2014-11-12 13:00,2014-11-23 13:00,2015-06-09 15:00,2015-06-20 15:00,,PT_Normal,,,,,J2OJx/ECyEaq6d0pYh3vxw,eZ8oZxtBOkivBMKOUp9G+g,,,N,0,0,,,2014-04-13 07:21,2014-04-14 16:04,admin,admin,
2318,142415,6971,40087,7842,0,N,N,N,CP_Phys,TT_Task,DT_FixedDrtn,TK_NotStart,CZA-TK-0725-1450,Cutting of Annular Plates,8486,3228,0,10,0,168.96,168.96,10,0,0,0,,,,2015-02-01 13:00,2015-02-02 13:00,,2014-01-20 15:00,2014-01-21 15:00,2014-01-20 15:00,2014-01-21 15:00,2014-01-20 15:00,2014-01-21 15:00,2015-02-01 13:00,2015-02-02 13:00,,PT_Normal,,,,,H1M9uxgfXE+28oEIuLNLug,BgI98GbiDkWOuZ3PNgswCw,,,N,0,0,,,2014-04-13 07:21,2014-04-14 17:03,admin,admin,
2319,142416,6971,40087,7842,0,N,N,N,CP_Phys,TT_Task,DT_FixedDrtn,TK_NotStart,CZA-TK-0725-1460,Cutting of Bottom Plates,8486,3442,0,10,0,262.404,262.404,10,0,0,0,,,,2015-02-26 07:00,2015-02-26 17:00,,2014-01-20 15:00,2014-01-21 15:00,2014-01-20 15:00,2014-01-21 15:00,2014-01-20 15:00,2014-01-21 15:00,2015-02-26 07:00,2015-02-26 17:00,,PT_Normal,,,,,7Y7LHbKl7EekF7l5O9e0fQ,zUx3+bM8e0KRqlHnrSBbMw,,,N,0,0,,,2014-04-13 07:21,2014-04-14 17:03,admin,admin,
2320,142417,6971,40087,7842,0,N,N,N,CP_Phys,TT_Task,DT_FixedDrtn,TK_NotStart,CZA-TK-0725-1470,"Cutting, Beveling & Rolling Shell No.1",8486,3442,0,10,0,240.6,240.6,10,0,0,0,,,,2015-02-28 07:00,2015-02-28 17:00,,2014-01-21 15:00,2014-01-22 15:00,2014-01-21 15:00,2014-01-22 15:00,2014-01-21 15:00,2014-01-22 15:00,2015-02-28 07:00,2015-02-28 17:00,,PT_Normal,,,,,M1wOmOYHA02x6njuhjH7fg,EfXlm1yf4EiQ8bwhalWbhg,,,N,0,0,,,2014-04-13 07:21,2014-04-14 17:03,admin,admin,
2321,142418,6971,40087,7842,0,N,N,N,CP_Phys,TT_Task,DT_FixedDrtn,TK_NotStart,CZA-TK-0725-1480,"Cutting, Bevelling & Rolling Shell No.2",8486,3442,0,10,0,206.2218,206.2218,10,0,0,0,,,,2015-02-28 07:00,2015-02-28 17:00,,2014-01-21 15:00,2014-01-22 15:00,2014-01-21 15:00,2014-01-22 15:00,2014-01-21 15:00,2014-01-22 15:00,2015-02-28 07:00,2015-02-28 17:00,,PT_Normal,,,,,pxR2DgYRBEarM7sW5ExcFg,wx/PlGDx6ES8Pl2fyMq0eA,,,N,0,0,,,2014-04-13 07:21,2014-04-14 17:03,admin,admin,
2322,142419,6971,40087,7842,0,N,N,N,CP_Phys,TT_Task,DT_FixedDrtn,TK_NotStart,CZA-TK-0725-1490,"Cutting, Fit-up & Welding of Shell Nozzle, Manholes and Other Appurtanances",8486,3442,0,50,0,0,0,50,0,0,0,,,,2015-03-01 07:00,2015-03-05 17:00,,2014-01-22 15:00,2014-01-28 15:00,2014-01-22 15:00,2014-01-28 15:00,2014-01-22 15:00,2014-01-28 15:00,2015-03-01 07:00,2015-03-05 17:00,,PT_Normal,,,,,f9lYHBFPak2OjM/Kjt/94g,p33GPHKVDkuvTG+Etnizkg,,,N,0,0,,,2014-04-13 07:21,2014-04-14 17:03,admin,admin,
2323,142420,6971,40087,7842,0,N,N,N,CP_Phys,TT_Task,DT_FixedDrtn,TK_NotStart,CZA-TK-0725-1500,"Cutting, Bevelling and Rolling Shell No.3",8486,3442,0,20,0,206.2218,206.2218,20,0,0,0,,,,2015-03-07 07:00,2015-03-08 17:00,,2014-01-28 15:00,2014-01-30 15:00,2014-01-28 15:00,2014-01-30 15:00,2014-01-28 15:00,2014-01-30 15:00,2015-03-07 07:00,2015-03-08 17:00,,PT_Normal,,,,,hnMjYKexcUeoY5K3+5nBYg,Fy1dSPW3DESCBpkZZ4LAtw,,,N,0,0,,,2014-04-13 07:21,2014-04-14 17:03,admin,admin,
2324,142421,6971,40087,7842,0,N,N,N,CP_Phys,TT_Task,DT_FixedDrtn,TK_NotStart,CZA-TK-0725-1510,Cutting of Floating Deck Plate,8486,3442,0,50,0,414.2085,414.2085,50,0,0,0,,,,2015-03-09 07:00,2015-03-14 17:00,,2014-01-30 15:00,2014-02-05 15:00,2014-01-30 15:00,2014-02-05 15:00,2014-01-30 15:00,2014-02-05 15:00,2015-03-09 07:00,2015-03-14 17:00,,PT_Normal,,,,,K+jKsqLvR0OGgj5SWc2lGA,il6Dd/eNzkmXFsN9ci5lOw,,,N,0,0,,,2014-04-13 07:21,2014-04-14 17:03,admin,admin,
2325,142422,6971,40087,7842,0,N,N,N,CP_Phys,TT_Task,DT_FixedDrtn,TK_NotStart,CZA-TK-0725-1520,"Cutting, Fit-up and Welding of Pontoon",8486,3442,0,70,0,169.8666,169.8666,70,0,0,0,,,,2015-03-15 07:00,2015-03-22 17:00,,2014-02-05 15:00,2014-02-13 15:00,2014-02-05 15:00,2014-02-13 15:00,2014-02-05 15:00,2014-02-13 15:00,2015-03-15 07:00,2015-03-22 17:00,,PT_Normal,,,,,SOgdWB7wukqf/3AYkP78uw,ZuqQvnZxNEK6vuSIL9JeBg,,,N,0,0,,,2014-04-13 07:21,2014-04-14 17:03,admin,admin,
2326,142423,6971,40087,7842,0,N,N,N,CP_Phys,TT_Task,DT_FixedDrtn,TK_NotStart,CZA-TK-0725-1530,Cutting of Floating Legs and Manholes,8486,3442,0,10,0,0,0,10,0,0,0,,,,2015-03-23 07:00,2015-03-23 17:00,,2014-02-13 15:00,2014-02-15 15:00,2014-02-13 15:00,2014-02-15 15:00,2014-02-13 15:00,2014-02-15 15:00,2015-03-23 07:00,2015-03-23 17:00,,PT_Normal,,,,,jfmLjfcGSkmqPek6ggGikA,hg0Yd3uZO0mbRpHlbsCnGg,,,N,0,0,,,2014-04-13 07:21,2014-04-14 17:03,admin,admin,
2327,142424,6971,40087,7842,0,N,N,N,CP_Phys,TT_Task,DT_FixedDrtn,TK_NotStart,CZA-TK-0725-1540,"Cutting, Bevelling & Rolling of Shell No.4",8486,3442,0,10,0,206.2218,206.2218,10,0,0,0,,,,2015-03-24 07:00,2015-03-24 17:00,,2014-02-15 15:00,2014-02-16 15:00,2014-02-15 15:00,2014-02-16 15:00,2014-02-15 15:00,2014-02-16 15:00,2015-03-24 07:00,2015-03-24 17:00,,PT_Normal,,,,,dExz9Oc04EasFKuj1eiuXw,ltIWBlzc+EikWaeTllha1w,,,N,0,0,,,2014-04-13 07:21,2014-04-14 17:03,admin,admin,
2328,142425,6971,40087,7842,0,N,N,N,CP_Phys,TT_Task,DT_FixedDrtn,TK_NotStart,CZA-TK-0725-1550,"Cutting, Bevelling & Rolling of Shell No.5",8486,3442,0,10,0,42.96,42.96,10,0,0,0,,,,2015-03-24 07:00,2015-03-24 17:00,,2014-02-15 15:00,2014-02-16 15:00,2014-02-15 15:00,2014-02-16 15:00,2014-02-15 15:00,2014-02-16 15:00,2015-03-24 07:00,2015-03-24 17:00,,PT_Normal,,,,,rLcMJPRg60+fq0+Zu2dpCg,06cx1atnyUuKMgzcEZluxg,,,N,0,0,,,2014-04-13 07:21,2014-04-14 17:03,admin,admin,
2329,142426,6971,40087,7842,0,N,N,N,CP_Phys,TT_Task,DT_FixedDrtn,TK_NotStart,CZA-TK-0725-1560,"Cutting, Bevelling & Rolling of Shell No.6",8486,3442,0,10,0,176.04,176.04,10,0,0,0,,,,2015-03-25 07:00,2015-03-25 17:00,,2014-02-16 15:00,2014-02-17 15:00,2014-02-16 15:00,2014-02-17 15:00,2014-02-16 15:00,2014-02-17 15:00,2015-03-25 07:00,2015-03-25 17:00,,PT_Normal,,,,,QTPaw5SBx02/CNdHM9RmjQ,7DVDZ2B4TkCdVNWXuMFg7w,,,N,0,0,,,2014-04-13 07:21,2014-04-14 17:03,admin,admin,
2330,142427,6971,40087,7842,0,N,N,N,CP_Phys,TT_Task,DT_FixedDrtn,TK_NotStart,CZA-TK-0725-1590,Cutting & Rolling of Compression Ring,8486,3442,0,30,0,0,0,30,0,0,0,,,,2015-03-26 07:00,2015-03-29 17:00,,2014-02-17 15:00,2014-02-20 15:00,2014-02-17 15:00,2014-02-20 15:00,2014-02-17 15:00,2014-02-20 15:00,2015-03-26 07:00,2015-03-29 17:00,,PT_Normal,,,,,mJnV6ksBmEmoCKRASGH0lw,Gn0+t6/Y80iZd3I9LeoIpw,,,N,0,0,,,2014-04-13 07:21,2014-04-14 17:03,admin,admin,
2331,142428,6971,40087,7842,0,N,N,N,CP_Phys,TT_Task,DT_FixedDrtn,TK_NotStart,CZA-TK-0725-1600,"Cutting, Fit-up and Welding of roof Structure",8486,3442,0,30,0,255.2364,255.2364,30,0,0,0,,,,2015-03-30 07:00,2015-04-01 17:00,,2014-02-20 15:00,2014-02-24 15:00,2014-02-20 15:00,2014-02-24 15:00,2014-02-20 15:00,2014-02-24 15:00,2015-03-30 07:00,2015-04-01 17:00,,PT_Normal,,,,,4hL6FE6dn0uGbkQh9WlM9A,DH9/dmslSEuhsJsMWDr1FA,,,N,0,0,,,2014-04-13 07:21,2014-04-14 17:03,admin,admin,
2332,142429,6971,40087,7842,0,N,N,N,CP_Phys,TT_Task,DT_FixedDrtn,TK_NotStart,CZA-TK-0725-1610,Cutting of Roof Plates,8486,3442,0,20,0,0,0,20,0,0,0,,,,2015-04-02 07:00,2015-04-04 17:00,,2014-02-24 15:00,2014-02-26 15:00,2014-02-24 15:00,2014-02-26 15:00,2014-02-24 15:00,2014-02-26 15:00,2015-04-02 07:00,2015-04-04 17:00,,PT_Normal,,,,,I0SchHnvhEmLzv4meg30Mg,CEPVGCFBaEuuJOAQcvHlaA,,,N,0,0,,,2014-04-13 07:21,2014-04-14 17:03,admin,admin,
2333,142430,6971,40087,7842,0,N,N,N,CP_Phys,TT_Task,DT_FixedDrtn,TK_NotStart,CZA-TK-0725-1630,"Cutting, Fit-up and Welding of Stairway Platform, Gratings and Handrails",8486,3442,0,70,0,0,0,70,0,0,0,,,,2015-04-06 13:00,2015-04-14 13:00,,2014-03-01 11:00,2014-03-09 11:00,2014-03-01 11:00,2014-03-09 11:00,2014-03-01 11:00,2014-03-09 11:00,2015-04-06 13:00,2015-04-14 13:00,,PT_Normal,,,,,7lSbE/j3kkiagGkP3xKh1w,CTQPDj7rSEO4iPVRmweqCg,,,N,0,0,,,2014-04-13 07:21,2014-04-14 17:03,admin,admin,
2334,142431,6971,40087,7842,0,N,N,N,CP_Phys,TT_Task,DT_FixedDrtn,TK_NotStart,CZA-TK-0725-1640,"Cutting, Fit-up and Welding of Roof Nozzles,Manholes and Other Appurtanances",8486,3442,1192,70,0,0,0,70,0,0,0,,,,2015-04-09 15:00,2015-04-18 15:00,,2014-03-04 13:00,2014-03-12 13:00,2014-03-04 13:00,2014-03-12 13:00,2014-03-04 13:00,2014-03-12 13:00,2015-04-09 15:00,2015-04-18 15:00,,PT_Normal,,,,,VH2Jcj6T5EeZIOIaN/pGrg,k81SxibB3UCDsehS1xvPEA,,,N,0,0,,,2014-04-13 07:21,2014-04-14 17:03,admin,admin,
2335,142432,6971,40087,7842,0,N,N,N,CP_Phys,TT_Task,DT_FixedDrtn,TK_NotStart,CZA-TK-0725-1620,"Cutting,Fit-up & Welding of roof Platform, Gratings and Handrails",8486,3442,0,100,0,0,0,100,0,0,0,,,,2015-04-05 07:00,2015-04-15 17:00,,2014-02-26 15:00,2014-03-10 15:00,2014-02-26 15:00,2014-03-10 15:00,2014-02-26 15:00,2014-03-10 15:00,2015-04-05 07:00,2015-04-15 17:00,,PT_Normal,,,,,AAYCHwt0M0emf+hd6yNR7g,v0lwfZ9cXEOhCL522s/WrA,,,N,0,0,,,2014-04-13 07:21,2014-04-14 17:03,admin,admin,
2336,142433,6971,40088,7842,0,N,N,N,CP_Phys,TT_Task,DT_FixedDrtn,TK_NotStart,CZA-TK-0725-2340,Tank Calibration,8381,1792,0,50,0,479.691718,479.691718,50,0,0,0,,,,2015-06-20 15:00,2015-06-25 15:00,,2014-11-23 13:00,2014-11-29 13:00,2014-11-23 13:00,2014-11-29 13:00,2014-11-23 13:00,2014-11-29 13:00,2015-06-20 15:00,2015-06-25 15:00,,PT_Normal,,,,,4gIrdRSyAUeQinpRka8s1Q,1cSUmOBlvU6dMiOif75TTQ,,,N,0,0,,,2014-04-13 07:21,2014-04-14 16:04,admin,admin,
2337,142434,6971,40088,7842,0,N,N,N,CP_Phys,TT_Task,DT_FixedDrtn,TK_NotStart,CZA-TK-0725-2350,Tank Handover,8381,1792,960,20,0,479.691718,479.691718,20,0,0,0,,,,2015-06-25 15:00,2015-06-28 15:00,,2014-11-29 13:00,2014-12-01 13:00,2014-11-29 13:00,2014-12-01 13:00,2014-11-29 13:00,2014-12-01 13:00,2015-06-25 15:00,2015-06-28 15:00,,PT_Normal,,,,,3wMMp3gxU0qTs1XtVHSEyA,lcoq1BwuZk+2CPyL0rJLLg,,,N,0,0,,,2014-04-13 07:21,2014-04-14 16:04,admin,admin,
2338,142435,6971,40070,7842,0,N,N,N,CP_Phys,TT_Mile,DT_FixedDrtn,TK_NotStart,CZA-TK-0725-1650,Foundation Takeover from Client,,0,0,0,0,0,0,0,0,0,0,2014-04-15 00:00,,,2014-04-14 17:00,2014-04-14 17:00,,2014-04-15 07:00,2014-04-15 07:00,2014-04-15 07:00,2014-04-15 07:00,2014-04-15 07:00,2014-04-15 07:00,2014-04-14 17:00,2014-04-14 17:00,CS_MSO,PT_Normal,,,,,lDzsf2fMekiHlbbUXNUhbQ,FZYx78ITFk2V1tOEbr2GHA,,,N,0,0,,,2014-04-13 07:21,2014-04-13 07:42,admin,admin,
2339,142436,6971,40107,7842,0,N,N,N,CP_Phys,TT_Task,DT_FixedDrtn,TK_NotStart,CZA-TK-0715-1600,"Filling,Holding and Transfering of Water",8374,1808,0,300,0,5223,5223,300,0,0,0,,,,2015-04-13 15:00,2015-05-18 15:00,,2014-09-15 07:00,2014-10-19 17:00,2014-09-15 07:00,2014-10-19 17:00,2014-09-15 07:00,2014-10-19 17:00,2015-04-13 15:00,2015-05-18 15:00,,PT_Normal,,,,,fy+uEd3pu0u6O1ojzpUOmg,RLnEnzoMskeZKmIHx6FlWw,,,N,0,0,,,2014-04-13 07:21,2014-04-14 15:34,admin,admin,
2340,142437,6971,39983,7842,0,N,N,N,CP_Phys,TT_Task,DT_FixedDrtn,TK_NotStart,CZA-TK-0715-1650,Cutting of Annular Plates,8479,3228,0,10,0,262.8,262.8,10,0,0,0,,,,2015-02-15 13:00,2015-02-16 13:00,,2014-02-03 15:00,2014-02-04 15:00,2014-02-03 15:00,2014-02-04 15:00,2014-02-03 15:00,2014-02-04 15:00,2015-02-15 13:00,2015-02-16 13:00,,PT_Normal,,,,,bJwTlBHWLk+ufq1kMQNMWQ,GMvhzA9n70aaMzpkBE2CjQ,,,N,0,0,,,2014-04-13 07:21,2014-04-14 17:03,admin,admin,
2341,142438,6971,39983,7842,0,N,N,N,CP_Phys,TT_Task,DT_FixedDrtn,TK_NotStart,CZA-TK-0715-1660,Cutting of Bottom Plates,8479,3228,0,10,0,705.297,705.297,10,0,0,0,,,,2015-02-15 13:00,2015-02-16 13:00,,2014-02-03 15:00,2014-02-04 15:00,2014-02-03 15:00,2014-02-04 15:00,2014-02-03 15:00,2014-02-04 15:00,2015-02-15 13:00,2015-02-16 13:00,,PT_Normal,,,,,BJJFkmnXdkepGY7VrEkKJg,p3y33H84QUKlltR88p3NHA,,,N,0,0,,,2014-04-13 07:21,2014-04-14 17:03,admin,admin,
2342,142439,6971,39983,7842,0,N,N,N,CP_Phys,TT_Task,DT_FixedDrtn,TK_NotStart,CZA-TK-0715-1670,"Cutting, Beveling & Rolling Shell No.7",8479,3228,0,10,0,309.2364,309.2364,10,0,0,0,,,,2015-02-16 13:00,2015-02-17 13:00,,2014-02-04 15:00,2014-02-05 15:00,2014-02-04 15:00,2014-02-05 15:00,2014-02-04 15:00,2014-02-05 15:00,2015-02-16 13:00,2015-02-17 13:00,,PT_Normal,,,,,vFoCvHdW4kaMF/170siImw,h+USjIzDQkiAsOxQNLmJYw,,,N,0,0,,,2014-04-13 07:21,2014-04-14 17:03,admin,admin,
2343,142440,6971,39983,7842,0,N,N,N,CP_Phys,TT_Task,DT_FixedDrtn,TK_NotStart,CZA-TK-0715-1680,"Cutting, Bevelling & Rolling Shell No.8",8479,3228,0,10,0,206.1576,206.1576,10,0,0,0,,,,2015-02-16 13:00,2015-02-17 13:00,,2014-02-04 15:00,2014-02-05 15:00,2014-02-04 15:00,2014-02-05 15:00,2014-02-04 15:00,2014-02-05 15:00,2015-02-16 13:00,2015-02-17 13:00,,PT_Normal,,,,,sSIjboF/TEWv6iMLZowbTg,scX5J+iCzkOql3oF2PW0jg,,,N,0,0,,,2014-04-13 07:21,2014-04-14 17:03,admin,admin,
2344,142441,6971,39983,7842,0,N,N,N,CP_Phys,TT_Task,DT_FixedDrtn,TK_NotStart,CZA-TK-0715-1690,"Cutting, Fit-up & Welding of Shell Nozzle, Manholes and Other Appurtanances (Upper Part)",8479,3228,0,50,0,0,0,50,0,0,0,,,,2015-02-17 13:00,2015-02-23 13:00,,2014-02-05 15:00,2014-02-11 15:00,2014-02-05 15:00,2014-02-11 15:00,2014-02-05 15:00,2014-02-11 15:00,2015-02-17 13:00,2015-02-23 13:00,,PT_Normal,,,,,QMyphK1DqEmnmjFBVJfxtw,HOyzpATlnUeM7OM7LgsEng,,,N,0,0,,,2014-04-13 07:21,2014-04-14 17:03,admin,admin,
2345,142442,6971,39983,7842,0,N,N,N,CP_Phys,TT_Task,DT_FixedDrtn,TK_NotStart,CZA-TK-0715-1700,"Cutting, Fit-up and Welding of Stairway Platform, Gratings and Handrails (upper Part)",8479,3228,0,70,0,0,0,70,0,0,0,,,,2015-02-18 11:00,2015-02-26 11:00,,2014-02-06 13:00,2014-02-15 13:00,2014-02-06 13:00,2014-02-15 13:00,2014-02-06 13:00,2014-02-15 13:00,2015-02-18 11:00,2015-02-26 11:00,,PT_Normal,,,,,6203nqEAOk+8gtQ8D8XjXg,zxWUw0H1GEqb4DdR0iLpBw,,,N,0,0,,,2014-04-13 07:21,2014-04-14 17:03,admin,admin,
2346,142443,6971,39983,7842,0,N,N,N,CP_Phys,TT_Task,DT_FixedDrtn,TK_NotStart,CZA-TK-0715-1710,Cutting of Floating Deck Plate,8479,3228,0,50,0,504.864,504.864,50,0,0,0,,,,2015-02-26 11:00,2015-03-04 11:00,,2014-02-15 13:00,2014-02-20 13:00,2014-02-15 13:00,2014-02-20 13:00,2014-02-15 13:00,2014-02-20 13:00,2015-02-26 11:00,2015-03-04 11:00,,PT_Normal,,,,,XutYbNwuPUapJ29vI4xAew,wtmcywYqd0C6XMqeM9yhrQ,,,N,0,0,,,2014-04-13 07:21,2014-04-14 17:03,admin,admin,
2347,142444,6971,39983,7842,0,N,N,N,CP_Phys,TT_Task,DT_FixedDrtn,TK_NotStart,CZA-TK-0715-1720,"Cutting, Fit-up and Welding of Pontoon",8479,3228,0,70,0,486.363,486.363,70,0,0,0,,,,2015-03-01 07:00,2015-03-08 17:00,,2014-02-17 09:00,2014-02-25 09:00,2014-02-17 09:00,2014-02-25 09:00,2014-02-17 09:00,2014-02-25 09:00,2015-03-01 07:00,2015-03-08 17:00,,PT_Normal,,,,,tSXM54+duUK7K3UwOqUJ3g,dqpjV15sPUGX8qnbIrb7LQ,,,N,0,0,,,2014-04-13 07:21,2014-04-14 17:03,admin,admin,
2348,142445,6971,39983,7842,0,N,N,N,CP_Phys,TT_Task,DT_FixedDrtn,TK_NotStart,CZA-TK-0715-1730,Cutting of Floating Legs and Manholes,8479,3228,0,70,0,0,0,70,0,0,0,,,,2015-03-02 13:00,2015-03-10 13:00,,2014-02-18 15:00,2014-02-26 15:00,2014-02-18 15:00,2014-02-26 15:00,2014-02-18 15:00,2014-02-26 15:00,2015-03-02 13:00,2015-03-10 13:00,,PT_Normal,,,,,JUjveYJNWE+lx9j0NoWkYQ,MjBmDat3FESdYufOYaZATw,,,N,0,0,,,2014-04-13 07:21,2014-04-14 17:03,admin,admin,
2349,142446,6971,39983,7842,0,N,N,N,CP_Phys,TT_Task,DT_FixedDrtn,TK_NotStart,CZA-TK-0715-1740,"Cutting, Fit-up and Welding of roof Structure",8479,3228,0,50,0,889.125,889.125,50,0,0,0,,,,2015-03-10 13:00,2015-03-16 13:00,,2014-02-26 15:00,2014-03-04 15:00,2014-02-26 15:00,2014-03-04 15:00,2014-02-26 15:00,2014-03-04 15:00,2015-03-10 13:00,2015-03-16 13:00,,PT_Normal,,,,,HC5LR0tFuUuJTrcB2N2rdw,ifa+yxEnyEK3SuXpmVppzQ,,,N,0,0,,,2014-04-13 07:21,2014-04-14 17:03,admin,admin,
2350,142447,6971,39983,7842,0,N,N,N,CP_Phys,TT_Task,DT_FixedDrtn,TK_NotStart,CZA-TK-0715-1750,Cutting of Roof Plates,8479,3228,0,20,0,0,0,20,0,0,0,,,,2015-03-10 13:00,2015-03-12 13:00,,2014-02-26 15:00,2014-03-01 15:00,2014-02-26 15:00,2014-03-01 15:00,2014-02-26 15:00,2014-03-01 15:00,2015-03-10 13:00,2015-03-12 13:00,,PT_Normal,,,,,y/xVhGBvo0iSx5+HtQ/DLg,YMDUZZfrzUGXeAFB7V4F5Q,,,N,0,0,,,2014-04-13 07:21,2014-04-14 17:03,admin,admin,
2351,142448,6971,39983,7842,0,N,N,N,CP_Phys,TT_Task,DT_FixedDrtn,TK_NotStart,CZA-TK-0715-1760,Cutting & Rolling of Compression Ring,8479,3228,0,20,0,0,0,20,0,0,0,,,,2015-03-10 13:00,2015-03-12 13:00,,2014-02-26 15:00,2014-03-01 15:00,2014-02-26 15:00,2014-03-01 15:00,2014-02-26 15:00,2014-03-01 15:00,2015-03-10 13:00,2015-03-12 13:00,,PT_Normal,,,,,Kb425GciEEuh2QsFYISoDg,OXlICk4P8EScW/PcmyPSfw,,,N,0,0,,,2014-04-13 07:21,2014-04-14 17:03,admin,admin,
2352,142449,6971,39983,7842,0,N,N,N,CP_Phys,TT_Task,DT_FixedDrtn,TK_NotStart,CZA-TK-0715-1770,"Cutting, Fit-up and Welding of Roof Nozzles,Manholes and Other Appurtanances",8479,3228,0,50,0,0,0,50,0,0,0,,,,2015-03-10 13:00,2015-03-16 13:00,,2014-02-26 15:00,2014-03-04 15:00,2014-02-26 15:00,2014-03-04 15:00,2014-02-26 15:00,2014-03-04 15:00,2015-03-10 13:00,2015-03-16 13:00,,PT_Normal,,,,,qUVA5TPd+E6vRRFPiZhL0A,s39uRh3RnUeWEGDWTu4Lsw,,,N,0,0,,,2014-04-13 07:21,2014-04-14 17:03,admin,admin,
2353,142450,6971,39983,7842,0,N,N,N,CP_Phys,TT_Task,DT_FixedDrtn,TK_NotStart,CZA-TK-0715-1780,"Cutting,Fit-up & Welding of roof Platform, Gratings and Handrails",8479,3228,0,70,0,0,0,70,0,0,0,,,,2015-03-10 13:00,2015-03-18 13:00,,2014-02-26 15:00,2014-03-06 15:00,2014-02-26 15:00,2014-03-06 15:00,2014-02-26 15:00,2014-03-06 15:00,2015-03-10 13:00,2015-03-18 13:00,,PT_Normal,,,,,mqqprW8s+EicTx1CStRUVA,lu4i43mOAEGna9Wxv+GqjQ,,,N,0,0,,,2014-04-13 07:21,2014-04-14 17:03,admin,admin,
2354,142451,6971,39983,7842,0,N,N,N,CP_Phys,TT_Task,DT_FixedDrtn,TK_NotStart,CZA-TK-0715-1790,"Cutting, Bevelling & Rolling Shell No.6 & 5",8479,3228,0,10,0,669.9942,669.9942,10,0,0,0,,,,2015-03-18 13:00,2015-03-19 13:00,,2014-03-06 15:00,2014-03-08 15:00,2014-03-06 15:00,2014-03-08 15:00,2014-03-06 15:00,2014-03-08 15:00,2015-03-18 13:00,2015-03-19 13:00,,PT_Normal,,,,,FP0IjyULyUW/MtWR1TxT7w,AY9PJOnfOUO8o88p2tr/Mw,,,N,0,0,,,2014-04-13 07:21,2014-04-14 17:03,admin,admin,
2355,142452,6971,39983,7842,0,N,N,N,CP_Phys,TT_Task,DT_FixedDrtn,TK_NotStart,CZA-TK-0715-1800,"Cutting, Bevelling & Rolling Shell No.4 & 3",8479,3228,0,10,0,979.3683,979.3683,10,0,0,0,,,,2015-03-19 13:00,2015-03-21 13:00,,2014-03-08 15:00,2014-03-09 15:00,2014-03-08 15:00,2014-03-09 15:00,2014-03-08 15:00,2014-03-09 15:00,2015-03-19 13:00,2015-03-21 13:00,,PT_Normal,,,,,6NIwZjEygUGwwfSHubP8Rw,ULvJoR/Ktk2AnMe0XEzG8Q,,,N,0,0,,,2014-04-13 07:21,2014-04-14 17:03,admin,admin,
2356,142453,6971,39983,7842,0,N,N,N,CP_Phys,TT_Task,DT_FixedDrtn,TK_NotStart,CZA-TK-0715-1810,"Cutting, Bevelling & Rolling Shell No.2",8479,3228,0,10,0,618.6,618.6,10,0,0,0,,,,2015-03-21 13:00,2015-03-22 13:00,,2014-03-09 15:00,2014-03-10 15:00,2014-03-09 15:00,2014-03-10 15:00,2014-03-09 15:00,2014-03-10 15:00,2015-03-21 13:00,2015-03-22 13:00,,PT_Normal,,,,,RLYvvQRBAUmcWygKnUr37g,31XjkjZkh0CAB+Qnu5GexA,,,N,0,0,,,2014-04-13 07:21,2014-04-14 17:03,admin,admin,
2357,142454,6971,39983,7842,0,N,N,N,CP_Phys,TT_Task,DT_FixedDrtn,TK_NotStart,CZA-TK-0715-1820,"Cutting, Bevelling & Rolling Shell No.1",8479,3228,0,10,0,721.7499,721.7499,10,0,0,0,,,,2015-03-22 13:00,2015-03-23 13:00,,2014-03-10 15:00,2014-03-11 15:00,2014-03-10 15:00,2014-03-11 15:00,2014-03-10 15:00,2014-03-11 15:00,2015-03-22 13:00,2015-03-23 13:00,,PT_Normal,,,,,HD8zD7TnyEa/Fuct13ACKg,udbfS7YxWUWjt9Uwg9EyHg,,,N,0,0,,,2014-04-13 07:21,2014-04-14 17:03,admin,admin,
2358,142455,6971,39983,7842,0,N,N,N,CP_Phys,TT_Task,DT_FixedDrtn,TK_NotStart,CZA-TK-0715-1830,"Cutting, Fit-up & Welding of Shell Nozzle, Manholes and Other Appurtanances (Lower Part",8479,3228,0,70,0,0,0,70,0,0,0,,,,2015-03-24 09:00,2015-04-01 09:00,,2014-03-12 11:00,2014-03-20 11:00,2014-03-12 11:00,2014-03-20 11:00,2014-03-12 11:00,2014-03-20 11:00,2015-03-24 09:00,2015-04-01 09:00,,PT_Normal,,,,,WZ+d8Tqipky+HexG323ohw,wW6GUuVIjEytS5DwHpH8MQ,,,N,0,0,,,2014-04-13 07:21,2014-04-14 17:03,admin,admin,
2359,142456,6971,39983,7842,0,N,N,N,CP_Phys,TT_Task,DT_FixedDrtn,TK_NotStart,CZA-TK-0715-1840,"Cutting, Fit-up and Welding of Stairway Platform, Gratings and Handrails (Lower Part)",8479,3228,1420,50,0,0,0,50,0,0,0,,,,2015-03-25 15:00,2015-03-31 15:00,,2014-03-15 07:00,2014-03-19 17:00,2014-03-15 07:00,2014-03-19 17:00,2014-03-15 07:00,2014-03-19 17:00,2015-03-25 15:00,2015-03-31 15:00,,PT_Normal,,,,,czkl0jMCKki2OmEIwrQQJg,cxcMuzxON0aSXcmqTPFfyg,,,N,0,0,,,2014-04-13 07:21,2014-04-14 17:03,admin,admin,
2360,142457,6971,39984,7842,0,N,N,N,CP_Phys,TT_Task,DT_FixedDrtn,TK_NotStart,CZA-TK-0715-1620,Tank Calibration,8374,1898,0,50,0,1045,1045,50,0,0,0,,,,2015-06-20 15:00,2015-06-25 15:00,,2014-11-11 07:00,2014-11-16 17:00,2014-11-11 07:00,2014-11-16 17:00,2014-11-11 07:00,2014-11-16 17:00,2015-06-20 15:00,2015-06-25 15:00,,PT_Normal,,,,,uQtWopOFFUiT6NQcps669w,7MZJ62JeDE6ncSZQtoxfiQ,,,N,0,0,,,2014-04-13 07:21,2014-04-14 15:35,admin,admin,
2361,142458,6971,39984,7842,0,N,N,N,CP_Phys,TT_Task,DT_FixedDrtn,TK_NotStart,CZA-TK-0715-1630,Tank Handover,8374,1898,1066,20,0,1045,1045,20,0,0,0,,,,2015-06-25 15:00,2015-06-28 15:00,,2014-11-17 07:00,2014-11-18 17:00,2014-11-17 07:00,2014-11-18 17:00,2014-11-17 07:00,2014-11-18 17:00,2015-06-25 15:00,2015-06-28 15:00,,PT_Normal,,,,,2gDUTP7kwkW2nKK0XjDgBQ,pK0X9xGUO02dh5fKAcVQlw,,,N,0,0,,,2014-04-13 07:21,2014-04-14 15:35,admin,admin,
2362,142459,6971,40204,7842,0,N,N,N,CP_Phys,TT_Task,DT_FixedDrtn,TK_NotStart,CZA-TK-0715-1920,Erection and Fit-up,8374,1808,0,10,0,90.250599,90.250599,10,0,0,0,,,,2014-11-01 15:00,2014-11-02 15:00,,2014-04-05 07:00,2014-04-05 17:00,2014-04-05 07:00,2014-04-05 17:00,2014-04-05 07:00,2014-04-05 17:00,2014-11-01 15:00,2014-11-02 15:00,,PT_Normal,,,,,T+bnKK2+BEGv7I3uSv//7A,M7M9G26Pk0qEp9BlFXvr8g,,,N,0,0,,,2014-04-13 07:21,2014-04-14 15:33,admin,admin,
2363,142460,6971,40204,7842,0,N,N,N,CP_Phys,TT_Task,DT_FixedDrtn,TK_NotStart,CZA-TK-0715-1930,Welding,8374,1808,0,40,0,112.813248,112.813248,40,120,0,120,,,,2014-11-02 15:00,2014-11-06 15:00,,2014-04-06 07:00,2014-04-09 17:00,2014-04-06 07:00,2014-04-09 17:00,2014-04-06 07:00,2014-04-09 17:00,2014-11-02 15:00,2014-11-06 15:00,,PT_Normal,,,,,D4V2hz9TI0e+pzZo16BY+w,IAhPgb5HuEeVsWNz8hikqg,,,N,0,0,,,2014-04-13 07:21,2014-04-14 15:33,admin,admin,
2364,142461,6971,40204,7842,0,N,N,N,CP_Phys,TT_Task,DT_FixedDrtn,TK_NotStart,CZA-TK-0715-1940,Inspection,8374,1808,0,50,0,22.56265,22.56265,50,0,0,0,,,,2014-11-01 15:00,2014-11-06 15:00,,2014-04-05 07:00,2014-04-09 17:00,2014-04-05 07:00,2014-04-09 17:00,2014-04-05 07:00,2014-04-09 17:00,2014-11-01 15:00,2014-11-06 15:00,,PT_Normal,,,,,QPxvJDzQxkuy7Kv4RJH9mg,9msRFFQgs0ivaPMYNU4kzQ,,,N,0,0,,,2014-04-13 07:21,2014-04-14 15:33,admin,admin,
2365,142462,6971,40142,7842,0,N,N,N,CP_Phys,TT_Task,DT_FixedDrtn,TK_NotStart,CZA-TK-0715-1430,"Jacking, Erection and Fit-up",8374,1808,0,10,0,428.742745,428.742745,10,20,0,20,,,,2015-03-05 15:00,2015-03-07 15:00,,2014-08-07 07:00,2014-08-07 17:00,2014-08-07 07:00,2014-08-07 17:00,2014-08-07 07:00,2014-08-07 17:00,2015-03-05 15:00,2015-03-07 15:00,,PT_Normal,,,,,F65W76LNhUeGtlRhd/rHHg,ZUyQ3ACQW0CdvuG4WUxyGQ,,,N,0,0,,,2014-04-13 07:21,2014-04-14 15:33,admin,admin,
2366,142463,6971,40142,7842,0,N,N,N,CP_Phys,TT_Task,DT_FixedDrtn,TK_NotStart,CZA-TK-0715-1440,Welding,8374,1808,0,40,0,535.928431,535.928431,40,120,0,120,,,,2015-03-07 15:00,2015-03-11 15:00,,2014-08-09 07:00,2014-08-12 17:00,2014-08-09 07:00,2014-08-12 17:00,2014-08-09 07:00,2014-08-12 17:00,2015-03-07 15:00,2015-03-11 15:00,,PT_Normal,,,,,B1vQ+mCDbU6V89H7gB6USw,aoT6Fv4beUel2bFbzYGY1A,,,N,0,0,,,2014-04-13 07:21,2014-04-14 15:33,admin,admin,
2367,142464,6971,40142,7842,0,N,N,N,CP_Phys,TT_Task,DT_FixedDrtn,TK_NotStart,CZA-TK-0715-1450,Inspection,8374,1808,0,50,0,107.185686,107.185686,50,0,0,0,,,,2015-03-05 15:00,2015-03-11 15:00,,2014-08-07 07:00,2014-08-12 17:00,2014-08-07 07:00,2014-08-12 17:00,2014-08-07 07:00,2014-08-12 17:00,2015-03-05 15:00,2015-03-11 15:00,,PT_Normal,,,,,0SAB5JCxoEiJ43Wmzub3BQ,pM/sgwJALk6JB+2n/2NEoA,,,N,0,0,,,2014-04-13 07:21,2014-04-14 15:33,admin,admin,
2368,142465,6971,40306,7842,0,N,N,N,CP_Phys,TT_Task,DT_FixedDrtn,TK_NotStart,CZA-TK-0715-1340,"Jacking, Erection and Fit-up",8374,1808,0,10,0,293.306565,293.306565,10,20,0,20,,,,2015-02-16 15:00,2015-02-17 15:00,,2014-07-21 07:00,2014-07-21 17:00,2014-07-21 07:00,2014-07-21 17:00,2014-07-21 07:00,2014-07-21 17:00,2015-02-16 15:00,2015-02-17 15:00,,PT_Normal,,,,,8YkJHHBtf0eoxggqj7KVrA,YnX8zxhokUKMQCTCRaclfg,,,N,0,0,,,2014-04-13 07:21,2014-04-14 15:33,admin,admin,
2369,142466,6971,40306,7842,0,N,N,N,CP_Phys,TT_Task,DT_FixedDrtn,TK_NotStart,CZA-TK-0715-1350,Welding,8374,1808,0,40,0,366.633207,366.633207,40,120,0,120,,,,2015-02-17 15:00,2015-02-22 15:00,,2014-07-22 07:00,2014-07-26 17:00,2014-07-22 07:00,2014-07-26 17:00,2014-07-22 07:00,2014-07-26 17:00,2015-02-17 15:00,2015-02-22 15:00,,PT_Normal,,,,,COS7yTkc9Emf0unDiXE5rw,n/Qu2csw5kiVqDmdiZ0u/w,,,N,0,0,,,2014-04-13 07:21,2014-04-14 15:33,admin,admin,
2370,142467,6971,40306,7842,0,N,N,N,CP_Phys,TT_Task,DT_FixedDrtn,TK_NotStart,CZA-TK-0715-1360,Inspection,8374,1808,0,50,0,73.326641,73.326641,50,0,0,0,,,,2015-02-16 15:00,2015-02-22 15:00,,2014-07-21 07:00,2014-07-26 17:00,2014-07-21 07:00,2014-07-26 17:00,2014-07-21 07:00,2014-07-26 17:00,2015-02-16 15:00,2015-02-22 15:00,,PT_Normal,,,,,wwkFcs1IsE2Ace4Gjs0Y0Q,4TpcH2XeC0WUYRbNmOfqhw,,,N,0,0,,,2014-04-13 07:21,2014-04-14 15:33,admin,admin,
2371,142468,6971,40307,7842,0,N,N,N,CP_Phys,TT_Task,DT_FixedDrtn,TK_NotStart,CZA-TK-0715-1400,"Jacking,Erection and Fit-up",8374,1808,0,10,0,428.742745,428.742745,10,20,0,20,,,,2015-02-28 15:00,2015-03-01 15:00,,2014-08-02 07:00,2014-08-02 17:00,2014-08-02 07:00,2014-08-02 17:00,2014-08-02 07:00,2014-08-02 17:00,2015-02-28 15:00,2015-03-01 15:00,,PT_Normal,,,,,awmwjsYKVEqwFiziwwXgSg,7bTX63E0XEyMK3oUjYq31A,,,N,0,0,,,2014-04-13 07:21,2014-04-14 15:33,admin,admin,
2372,142469,6971,40307,7842,0,N,N,N,CP_Phys,TT_Task,DT_FixedDrtn,TK_NotStart,CZA-TK-0715-1410,Welding,8374,1808,0,40,0,535.928431,535.928431,40,120,0,120,,,,2015-03-01 15:00,2015-03-05 15:00,,2014-08-03 07:00,2014-08-06 17:00,2014-08-03 07:00,2014-08-06 17:00,2014-08-03 07:00,2014-08-06 17:00,2015-03-01 15:00,2015-03-05 15:00,,PT_Normal,,,,,+1zk7/dBqU6nORxsM1IwQA,stXsJHokt0WOps3RbyPCEA,,,N,0,0,,,2014-04-13 07:21,2014-04-14 15:33,admin,admin,
2373,142470,6971,40307,7842,0,N,N,N,CP_Phys,TT_Task,DT_FixedDrtn,TK_NotStart,CZA-TK-0715-1420,Inspection,8374,1808,0,50,0,107.185686,107.185686,50,0,0,0,,,,2015-02-28 15:00,2015-03-05 15:00,,2014-08-02 07:00,2014-08-06 17:00,2014-08-02 07:00,2014-08-06 17:00,2014-08-02 07:00,2014-08-06 17:00,2015-02-28 15:00,2015-03-05 15:00,,PT_Normal,,,,,gAzbonVMaUGF6fvEimVIwA,dgveqXmpWkasu/UExCbEcg,,,N,0,0,,,2014-04-13 07:21,2014-04-14 15:33,admin,admin,
2374,142471,6971,40308,7842,0,N,N,N,CP_Phys,TT_Task,DT_FixedDrtn,TK_NotStart,CZA-TK-0715-1320,Erection and Fit-up,8374,1808,0,50,0,0,0,50,100,0,100,,,,2015-01-29 15:00,2015-02-04 15:00,,2014-07-03 07:00,2014-07-08 17:00,2014-07-03 07:00,2014-07-08 17:00,2014-07-03 07:00,2014-07-08 17:00,2015-01-29 15:00,2015-02-04 15:00,,PT_Normal,,,,,RN1aRGlq402l5jlupLARHA,fZjDZIbBz0+pcc8bsbRvfw,,,N,0,0,,,2014-04-13 07:21,2014-04-14 15:33,admin,admin,
2375,142472,6971,40308,7842,0,N,N,N,CP_Phys,TT_Task,DT_FixedDrtn,TK_NotStart,CZA-TK-0715-1330,Welding,8374,1808,0,100,0,0,0,100,200,0,200,,,,2015-02-04 15:00,2015-02-16 15:00,,2014-07-09 07:00,2014-07-20 17:00,2014-07-09 07:00,2014-07-20 17:00,2014-07-09 07:00,2014-07-20 17:00,2015-02-04 15:00,2015-02-16 15:00,,PT_Normal,,,,,IuJpegnrnkOPDqO9fIP/0Q,McDkAVDfQ0iAIa36Yg6BrQ,,,N,0,0,,,2014-04-13 07:21,2014-04-14 15:33,admin,admin,
2376,142473,6971,40308,7842,0,N,N,N,CP_Phys,TT_Task,DT_FixedDrtn,TK_NotStart,CZA-TK-0715-1640,Inspection,8374,1808,0,150,0,0,0,150,0,0,0,,,,2015-01-29 15:00,2015-02-16 15:00,,2014-07-03 07:00,2014-07-20 17:00,2014-07-03 07:00,2014-07-20 17:00,2014-07-03 07:00,2014-07-20 17:00,2015-01-29 15:00,2015-02-16 15:00,,PT_Normal,,,,,7K7DHyGDyUi5pfunpv9Zww,wz07Is6TI0KQ60nTWcMT/w,,,N,0,0,,,2014-04-13 07:21,2014-04-14 15:33,admin,admin,
2377,142474,6971,40309,7842,0,N,N,N,CP_Phys,TT_Task,DT_FixedDrtn,TK_NotStart,CZA-TK-0715-1460,"Jacking, Erection and Fit-up",8374,1808,0,10,0,270.807481,270.807481,10,20,0,20,,,,2015-03-11 15:00,2015-03-12 15:00,,2014-08-13 07:00,2014-08-13 17:00,2014-08-13 07:00,2014-08-13 17:00,2014-08-13 07:00,2014-08-13 17:00,2015-03-11 15:00,2015-03-12 15:00,,PT_Normal,,,,,scofPddJSkyI8WZ3ze7vZA,N11cvNC4CECw4jjEKGJg7Q,,,N,0,0,,,2014-04-13 07:21,2014-04-14 15:33,admin,admin,
2378,142475,6971,40309,7842,0,N,N,N,CP_Phys,TT_Task,DT_FixedDrtn,TK_NotStart,CZA-TK-0715-1470,Welding,8374,1808,0,40,0,338.509351,338.509351,40,120,0,120,,,,2015-03-12 15:00,2015-03-17 15:00,,2014-08-14 07:00,2014-08-18 17:00,2014-08-14 07:00,2014-08-18 17:00,2014-08-14 07:00,2014-08-18 17:00,2015-03-12 15:00,2015-03-17 15:00,,PT_Normal,,,,,qE8vu8r9Ek6dSS60UKmxyg,x2WZ0UuD5kiH3XRRI7izIA,,,N,0,0,,,2014-04-13 07:21,2014-04-14 15:33,admin,admin,
2379,142476,6971,40309,7842,0,N,N,N,CP_Phys,TT_Task,DT_FixedDrtn,TK_NotStart,CZA-TK-0715-1480,Inspection,8374,1808,0,50,0,67.70187,67.70187,50,0,0,0,,,,2015-03-11 15:00,2015-03-17 15:00,,2014-08-13 07:00,2014-08-18 17:00,2014-08-13 07:00,2014-08-18 17:00,2014-08-13 07:00,2014-08-18 17:00,2015-03-11 15:00,2015-03-17 15:00,,PT_Normal,,,,,cWBtaN8PGkiySnw/50J0xw,qzHmGaYcHUmf9/QGek7aPg,,,N,0,0,,,2014-04-13 07:21,2014-04-14 15:33,admin,admin,
2380,142477,6971,40310,7842,0,N,N,N,CP_Phys,TT_Task,DT_FixedDrtn,TK_NotStart,CZA-TK-0715-1370,"Jacking,Erection and Fit-up",8374,1808,0,10,0,293.306565,293.306565,10,20,0,20,,,,2015-02-22 15:00,2015-02-23 15:00,,2014-07-27 07:00,2014-07-27 17:00,2014-07-27 07:00,2014-07-27 17:00,2014-07-27 07:00,2014-07-27 17:00,2015-02-22 15:00,2015-02-23 15:00,,PT_Normal,,,,,NMCSBKProUiJ8fyY6ryxog,FKdn0sNB4UqHxvDcCRvYlA,,,N,0,0,,,2014-04-13 07:21,2014-04-14 15:33,admin,admin,
2381,142478,6971,40310,7842,0,N,N,N,CP_Phys,TT_Task,DT_FixedDrtn,TK_NotStart,CZA-TK-0715-1380,Welding,8374,1808,0,40,0,366.633207,366.633207,40,120,0,120,,,,2015-02-23 15:00,2015-02-28 15:00,,2014-07-28 07:00,2014-07-31 17:00,2014-07-28 07:00,2014-07-31 17:00,2014-07-28 07:00,2014-07-31 17:00,2015-02-23 15:00,2015-02-28 15:00,,PT_Normal,,,,,9u+fal2Wf0+M2pK8+Awq0g,80NE1nCWS0e33MdPRGfLSA,,,N,0,0,,,2014-04-13 07:21,2014-04-14 15:33,admin,admin,
2382,142479,6971,40310,7842,0,N,N,N,CP_Phys,TT_Task,DT_FixedDrtn,TK_NotStart,CZA-TK-0715-1390,Inspection,8374,1808,0,50,0,73.326641,73.326641,50,0,0,0,,,,2015-02-22 15:00,2015-02-28 15:00,,2014-07-27 07:00,2014-07-31 17:00,2014-07-27 07:00,2014-07-31 17:00,2014-07-27 07:00,2014-07-31 17:00,2015-02-22 15:00,2015-02-28 15:00,,PT_Normal,,,,,spGChrbZIkKzkKRzznqPoA,9miP+CWMU0SjH1r77BlpdA,,,N,0,0,,,2014-04-13 07:21,2014-04-14 15:33,admin,admin,
2383,142480,6971,40520,7842,0,N,N,N,CP_Phys,TT_Task,DT_FixedDrtn,TK_NotStart,CZA-TK-0715-2040,Laying and Fit-up,8374,1808,0,20,0,221.016728,221.016728,20,40,0,40,,,,2014-11-23 15:00,2014-11-25 15:00,,2014-04-27 07:00,2014-04-28 17:00,2014-04-27 07:00,2014-04-28 17:00,2014-04-27 07:00,2014-04-28 17:00,2014-11-23 15:00,2014-11-25 15:00,,PT_Normal,,,,,T57PH7/pnUe8vs1JCuR/YA,wvk1CgcygEay4IWqJduoxQ,,,N,0,0,,,2014-04-13 07:21,2014-04-14 15:33,admin,admin,
2384,142481,6971,40520,7842,0,N,N,N,CP_Phys,TT_Task,DT_FixedDrtn,TK_NotStart,CZA-TK-0715-2050,Welding,8374,1808,0,80,0,276.27091,276.27091,80,160,0,160,,,,2014-11-25 15:00,2014-12-04 15:00,,2014-04-29 07:00,2014-05-07 17:00,2014-04-29 07:00,2014-05-07 17:00,2014-04-29 07:00,2014-05-07 17:00,2014-11-25 15:00,2014-12-04 15:00,,PT_Normal,,,,,0hj9Czv9vEy8vkIjV9561g,9QLAN1WZdEWB0yKkD6ciOA,,,N,0,0,,,2014-04-13 07:21,2014-04-14 15:33,admin,admin,
2385,142482,6971,40520,7842,0,N,N,N,CP_Phys,TT_Task,DT_FixedDrtn,TK_NotStart,CZA-TK-0715-2060,Inspection,8374,1808,0,100,0,55.254182,55.254182,100,0,0,0,,,,2014-11-23 15:00,2014-12-04 15:00,,2014-04-27 07:00,2014-05-07 17:00,2014-04-27 07:00,2014-05-07 17:00,2014-04-27 07:00,2014-05-07 17:00,2014-11-23 15:00,2014-12-04 15:00,,PT_Normal,,,,,NXL869dRV0yfmS/EPODknw,cSNFxRII0UeEwOZfNhDwjg,,,N,0,0,,,2014-04-13 07:21,2014-04-14 15:33,admin,admin,
2386,142483,6971,40521,7842,0,N,N,N,CP_Phys,TT_Task,DT_FixedDrtn,TK_NotStart,CZA-TK-0715-1290,"Cutting,lnstallation and Fit-up",8374,1808,0,30,0,0,0,30,60,0,60,,,,2015-01-19 15:00,2015-01-22 15:00,,2014-06-23 07:00,2014-06-25 17:00,2014-06-23 07:00,2014-06-25 17:00,2014-06-23 07:00,2014-06-25 17:00,2015-01-19 15:00,2015-01-22 15:00,,PT_Normal,,,,,ZnuJJ7FSgU6IoSqpgjni1A,5tiFahJkjUqLYfePyldUHA,,,N,0,0,,,2014-04-13 07:21,2014-04-14 15:33,admin,admin,
2387,142484,6971,40521,7842,0,N,N,N,CP_Phys,TT_Task,DT_FixedDrtn,TK_NotStart,CZA-TK-0715-1300,Welding,8374,1808,0,60,0,0,0,60,120,0,120,,,,2015-01-22 15:00,2015-01-29 15:00,,2014-06-26 07:00,2014-07-02 17:00,2014-06-26 07:00,2014-07-02 17:00,2014-06-26 07:00,2014-07-02 17:00,2015-01-22 15:00,2015-01-29 15:00,,PT_Normal,,,,,5PL8gx7ookmrKcMx3vDdxQ,92yPwQD810mEmcL0vqERIw,,,N,0,0,,,2014-04-13 07:21,2014-04-14 15:33,admin,admin,
2388,142485,6971,40521,7842,0,N,N,N,CP_Phys,TT_Task,DT_FixedDrtn,TK_NotStart,CZA-TK-0715-1310,Inspection,8374,1808,0,90,0,0,0,90,0,0,0,,,,2015-01-19 15:00,2015-01-29 15:00,,2014-06-23 07:00,2014-07-02 17:00,2014-06-23 07:00,2014-07-02 17:00,2014-06-23 07:00,2014-07-02 17:00,2015-01-19 15:00,2015-01-29 15:00,,PT_Normal,,,,,eMcdB2p8YEiYvJ5k4H5DtQ,rEWkP/ZcAUCBralZzWJPKg,,,N,0,0,,,2014-04-13 07:21,2014-04-14 15:33,admin,admin,
2389,142486,6971,40522,7842,0,N,N,N,CP_Phys,TT_Task,DT_FixedDrtn,TK_NotStart,CZA-TK-0715-2070,"Laying, Cutting all Holes and Fit-up",8374,1808,0,20,0,212.917457,212.917457,20,0,0,0,,,,2014-12-04 15:00,2014-12-07 15:00,,2014-05-08 07:00,2014-05-10 17:00,2014-05-08 07:00,2014-05-10 17:00,2014-05-08 07:00,2014-05-10 17:00,2014-12-04 15:00,2014-12-07 15:00,,PT_Normal,,,,,6tzlyRZvb0GnzBTHN6nrNw,2OMvO6mhEUqGZiqDDJxIcA,,,N,0,0,,,2014-04-13 07:21,2014-04-14 15:33,admin,admin,
2390,142487,6971,40522,7842,0,N,N,N,CP_Phys,TT_Task,DT_FixedDrtn,TK_NotStart,CZA-TK-0715-2080,Welding,8374,1828,20,80,0,266.146821,266.146821,80,160,0,160,,,,2014-12-07 15:00,2014-12-16 15:00,,2014-05-08 07:00,2014-05-17 17:00,2014-05-08 07:00,2014-05-17 17:00,2014-05-08 07:00,2014-05-17 17:00,2014-12-07 15:00,2014-12-16 15:00,,PT_Normal,,,,,qocpZBE5hEOGChVlGNAZKQ,hQGjZwny90+T6lv7iEYR2Q,,,N,0,0,,,2014-04-13 07:21,2014-04-14 15:33,admin,admin,
2391,142488,6971,40522,7842,0,N,N,N,CP_Phys,TT_Task,DT_FixedDrtn,TK_NotStart,CZA-TK-0715-2090,Inspection,8374,1808,0,100,0,53.229364,53.229364,100,0,0,0,,,,2014-12-04 15:00,2014-12-16 15:00,,2014-05-08 07:00,2014-05-19 17:00,2014-05-08 07:00,2014-05-19 17:00,2014-05-08 07:00,2014-05-19 17:00,2014-12-04 15:00,2014-12-16 15:00,,PT_Normal,,,,,1Y9hQ7m0KEmuOPP4s4ZbbQ,iGuKFeCcaUG+u6Txep9ffA,,,N,0,0,,,2014-04-13 07:21,2014-04-14 15:33,admin,admin,
2392,142489,6971,40314,7842,0,N,N,N,CP_Phys,TT_Task,DT_FixedDrtn,TK_NotStart,CZA-TK-0715-2100,Erection and Fit-up,8374,1808,0,20,0,389.236504,389.236504,20,40,0,40,,,,2014-12-16 15:00,2014-12-18 15:00,,2014-05-20 07:00,2014-05-21 17:00,2014-05-20 07:00,2014-05-21 17:00,2014-05-20 07:00,2014-05-21 17:00,2014-12-16 15:00,2014-12-18 15:00,,PT_Normal,,,,,YYOZ1HVFlUWQFxunblDvBg,k/zOwCe79kWjbI7YfHqerg,,,N,0,0,,,2014-04-13 07:21,2014-04-14 15:33,admin,admin,
2393,142490,6971,40314,7842,0,N,N,N,CP_Phys,TT_Task,DT_FixedDrtn,TK_NotStart,CZA-TK-0715-2110,Welding,8374,1808,0,80,0,486.54563,486.54563,80,160,0,160,,,,2014-12-18 15:00,2014-12-28 15:00,,2014-05-22 07:00,2014-05-31 17:00,2014-05-22 07:00,2014-05-31 17:00,2014-05-22 07:00,2014-05-31 17:00,2014-12-18 15:00,2014-12-28 15:00,,PT_Normal,,,,,7RDXirN5AkK0dEAZY7OVCQ,H89Y/y3fm0yMktJBM5kVSg,,,N,0,0,,,2014-04-13 07:21,2014-04-14 15:33,admin,admin,
2394,142491,6971,40314,7842,0,N,N,N,CP_Phys,TT_Task,DT_FixedDrtn,TK_NotStart,CZA-TK-0715-2120,Inspection,8374,1808,0,100,0,97.309126,97.309126,100,0,0,0,,,,2014-12-16 15:00,2014-12-28 15:00,,2014-05-20 07:00,2014-05-31 17:00,2014-05-20 07:00,2014-05-31 17:00,2014-05-20 07:00,2014-05-31 17:00,2014-12-16 15:00,2014-12-28 15:00,,PT_Normal,,,,,TeFhQ2B2KkSDmcqJLsxVVg,AhAPQu6z/06U3LFku5SuPg,,,N,0,0,,,2014-04-13 07:21,2014-04-14 15:33,admin,admin,
2395,142492,6971,40215,7842,0,N,N,N,CP_Phys,TT_Task,DT_FixedDrtn,TK_NotStart,CZA-TK-0715-1490,"Jacking, Erection and Fit-up",8374,1808,0,10,0,315.963906,315.963906,10,20,0,20,,,,2015-03-17 15:00,2015-03-18 15:00,,2014-08-19 07:00,2014-08-19 17:00,2014-08-19 07:00,2014-08-19 17:00,2014-08-19 07:00,2014-08-19 17:00,2015-03-17 15:00,2015-03-18 15:00,,PT_Normal,,,,,TGVZ2isgQ0WUebdDyicuXg,S/Srg94z4EKurmNAMswVdg,,,N,0,0,,,2014-04-13 07:21,2014-04-14 15:33,admin,admin,
2396,142493,6971,40215,7842,0,N,N,N,CP_Phys,TT_Task,DT_FixedDrtn,TK_NotStart,CZA-TK-0715-1500,Welding,8374,1808,0,40,0,394.954882,394.954882,40,120,0,120,,,,2015-03-18 15:00,2015-03-23 15:00,,2014-08-20 07:00,2014-08-24 17:00,2014-08-20 07:00,2014-08-24 17:00,2014-08-20 07:00,2014-08-24 17:00,2015-03-18 15:00,2015-03-23 15:00,,PT_Normal,,,,,Ajck8M4Vb0CqtBnoQXdvPA,lY22eKvDik2aOdqg5scpAA,,,N,0,0,,,2014-04-13 07:21,2014-04-14 15:33,admin,admin,
2397,142494,6971,40215,7842,0,N,N,N,CP_Phys,TT_Task,DT_FixedDrtn,TK_NotStart,CZA-TK-0715-1510,Inspection,8374,1808,0,50,0,78.990976,78.990976,50,0,0,0,,,,2015-03-17 15:00,2015-03-23 15:00,,2014-08-19 07:00,2014-08-24 17:00,2014-08-19 07:00,2014-08-24 17:00,2014-08-19 07:00,2014-08-24 17:00,2015-03-17 15:00,2015-03-23 15:00,,PT_Normal,,,,,L1v4HOwdLUeDjxnH+wscLw,GIiUAKxTokWm2zgcgbgDAw,,,N,0,0,,,2014-04-13 07:21,2014-04-14 15:33,admin,admin,
2398,142495,6971,40148,7842,0,N,N,N,CP_Phys,TT_Task,DT_FixedDrtn,TK_NotStart,CZA-TK-0715-1520,"Lay-out, Cutting, and Fit-up",8374,1808,0,20,0,0,0,20,40,0,40,,,,2015-03-23 15:00,2015-03-25 15:00,,2014-08-25 07:00,2014-08-26 17:00,2014-08-25 07:00,2014-08-26 17:00,2014-08-25 07:00,2014-08-26 17:00,2015-03-23 15:00,2015-03-25 15:00,,PT_Normal,,,,,tAJEY6aNhUKqb+SQc+0QUA,AVGJCsWNtk+W38zZ/Q1lhw,,,N,0,0,,,2014-04-13 07:21,2014-04-14 15:33,admin,admin,
2399,142496,6971,40148,7842,0,N,N,N,CP_Phys,TT_Task,DT_FixedDrtn,TK_NotStart,CZA-TK-0715-1530,Welding,8374,1808,0,50,0,0,0,50,100,0,100,,,,2015-03-25 15:00,2015-03-31 15:00,,2014-08-27 07:00,2014-09-01 17:00,2014-08-27 07:00,2014-09-01 17:00,2014-08-27 07:00,2014-09-01 17:00,2015-03-25 15:00,2015-03-31 15:00,,PT_Normal,,,,,ihvNtaSKvEWstHQ+3cMKVw,dO26RisiPkSt9ZbirH/iwg,,,N,0,0,,,2014-04-13 07:21,2014-04-14 15:33,admin,admin,
2400,142497,6971,40148,7842,0,N,N,N,CP_Phys,TT_Task,DT_FixedDrtn,TK_NotStart,CZA-TK-0715-1540,Inspection,8374,1808,0,70,0,0,0,70,0,0,0,,,,2015-03-23 15:00,2015-03-31 15:00,,2014-08-25 07:00,2014-09-01 17:00,2014-08-25 07:00,2014-09-01 17:00,2014-08-25 07:00,2014-09-01 17:00,2015-03-23 15:00,2015-03-31 15:00,,PT_Normal,,,,,rr38e+IyxUa5uGqp+4qc6Q,n56hulsgcUWgY807UMYwUQ,,,N,0,0,,,2014-04-13 07:21,2014-04-14 15:33,admin,admin,
2401,142498,6971,40190,7842,0,N,N,N,CP_Phys,TT_Task,DT_FixedDrtn,TK_NotStart,CZA-TK-0715-1970,Inspection,8374,1808,0,50,0,33.843974,33.843974,50,0,0,0,,,,2014-11-06 15:00,2014-11-12 15:00,,2014-04-10 07:00,2014-04-15 17:00,2014-04-10 07:00,2014-04-15 17:00,2014-04-10 07:00,2014-04-15 17:00,2014-11-06 15:00,2014-11-12 15:00,,PT_Normal,,,,,FvRKAgwh9E6cWTTrupgH6Q,MBebmsl5OkmHjHPHyHeeDA,,,N,0,0,,,2014-04-13 07:21,2014-04-14 15:33,admin,admin,
2402,142499,6971,40190,7842,0,N,N,N,CP_Phys,TT_Task,DT_FixedDrtn,TK_NotStart,CZA-TK-0715-1950,Erection and Fit-up,8374,1808,0,10,0,135.375898,135.375898,10,20,0,20,,,,2014-11-06 15:00,2014-11-08 15:00,,2014-04-10 07:00,2014-04-10 17:00,2014-04-10 07:00,2014-04-10 17:00,2014-04-10 07:00,2014-04-10 17:00,2014-11-06 15:00,2014-11-08 15:00,,PT_Normal,,,,,a8TZ77Ads0GwmVGqyDj7hg,R+iDekeZK0uQ0qbPTlq1ig,,,N,0,0,,,2014-04-13 07:21,2014-04-14 15:33,admin,admin,
2403,142500,6971,40190,7842,0,N,N,N,CP_Phys,TT_Task,DT_FixedDrtn,TK_NotStart,CZA-TK-0715-1960,Welding,8374,1808,0,40,0,169.219872,169.219872,40,120,0,120,,,,2014-11-08 15:00,2014-11-12 15:00,,2014-04-12 07:00,2014-04-15 17:00,2014-04-12 07:00,2014-04-15 17:00,2014-04-12 07:00,2014-04-15 17:00,2014-11-08 15:00,2014-11-12 15:00,,PT_Normal,,,,,zdgNt2a5akORxRiURxIv9Q,OvGAkpRuaEa7RzCxMu9lCA,,,N,0,0,,,2014-04-13 07:21,2014-04-14 15:33,admin,admin,
2404,142501,6971,40218,7842,0,N,N,N,CP_Phys,TT_Task,DT_FixedDrtn,TK_NotStart,CZA-TK-0715-1980,"Cutting, Installation and Fit-up",8374,1808,0,20,0,0,0,20,40,0,40,,,,2014-11-12 15:00,2014-11-15 15:00,,2014-04-16 07:00,2014-04-17 17:00,2014-04-16 07:00,2014-04-17 17:00,2014-04-16 07:00,2014-04-17 17:00,2014-11-12 15:00,2014-11-15 15:00,,PT_Normal,,,,,ybo5Ik7N8UGmCMImGU66Yg,IBjHeK0E6kGLzadlUPczrw,,,N,0,0,,,2014-04-13 07:21,2014-04-14 15:33,admin,admin,
2405,142502,6971,40218,7842,0,N,N,N,CP_Phys,TT_Task,DT_FixedDrtn,TK_NotStart,CZA-TK-0715-1990,Welding,8374,1808,0,20,0,0,0,20,40,0,40,,,,2014-11-15 15:00,2014-11-17 15:00,,2014-04-19 07:00,2014-04-20 17:00,2014-04-19 07:00,2014-04-20 17:00,2014-04-19 07:00,2014-04-20 17:00,2014-11-15 15:00,2014-11-17 15:00,,PT_Normal,,,,,IgPG7ks20k6xAVIch/c2hQ,9Yyjgm2slUaehJoPhawVhg,,,N,0,0,,,2014-04-13 07:21,2014-04-14 15:33,admin,admin,
2406,142503,6971,40218,7842,0,N,N,N,CP_Phys,TT_Task,DT_FixedDrtn,TK_NotStart,CZA-TK-0715-2000,Inspection,8374,1808,0,40,0,0,0,40,0,0,0,,,,2014-11-12 15:00,2014-11-17 15:00,,2014-04-16 07:00,2014-04-20 17:00,2014-04-16 07:00,2014-04-20 17:00,2014-04-16 07:00,2014-04-20 17:00,2014-11-12 15:00,2014-11-17 15:00,,PT_Normal,,,,,1tylPmjuu0eCOR149/LD2g,ypS8/hjVhkO4WU2/j1WOLw,,,N,0,0,,,2014-04-13 07:21,2014-04-14 15:33,admin,admin,
2407,142504,6971,40219,7842,0,N,N,N,CP_Phys,TT_Task,DT_FixedDrtn,TK_NotStart,CZA-TK-0715-2010,Erection and Fit-up,8374,1808,0,20,0,0,0,20,40,0,40,,,,2014-11-17 15:00,2014-11-19 15:00,,2014-04-21 07:00,2014-04-22 17:00,2014-04-21 07:00,2014-04-22 17:00,2014-04-21 07:00,2014-04-22 17:00,2014-11-17 15:00,2014-11-19 15:00,,PT_Normal,,,,,5PsazidRykKF1gfNkvbrRQ,nTQgXGeq10KukkVdCvEBnw,,,N,0,0,,,2014-04-13 07:21,2014-04-14 15:33,admin,admin,
2408,142505,6971,40219,7842,0,N,N,N,CP_Phys,TT_Task,DT_FixedDrtn,TK_NotStart,CZA-TK-0715-2020,Welding,8374,1808,0,30,0,0,0,30,60,0,60,,,,2014-11-19 15:00,2014-11-23 15:00,,2014-04-23 07:00,2014-04-26 17:00,2014-04-23 07:00,2014-04-26 17:00,2014-04-23 07:00,2014-04-26 17:00,2014-11-19 15:00,2014-11-23 15:00,,PT_Normal,,,,,otm23gAACEqxGqNpb/72fQ,xVOG07LzTkCCnkL59q9SrQ,,,N,0,0,,,2014-04-13 07:21,2014-04-14 15:33,admin,admin,
2409,142506,6971,40219,7842,0,N,N,N,CP_Phys,TT_Task,DT_FixedDrtn,TK_NotStart,CZA-TK-0715-2030,Inspection,8374,1808,0,50,0,0,0,50,0,0,0,,,,2014-11-17 15:00,2014-11-23 15:00,,2014-04-21 07:00,2014-04-26 17:00,2014-04-21 07:00,2014-04-26 17:00,2014-04-21 07:00,2014-04-26 17:00,2014-11-17 15:00,2014-11-23 15:00,,PT_Normal,,,,,7uDRzZ3VHUGmgcpVDFx/5Q,W1pXD3hAYk6mFGPWqQQxRw,,,N,0,0,,,2014-04-13 07:21,2014-04-14 15:33,admin,admin,
2410,142507,6971,40220,7842,0,N,N,N,CP_Phys,TT_Task,DT_FixedDrtn,TK_NotStart,CZA-TK-0715-1580,Installation of Primary and Secondary Seal,8374,1808,0,30,0,0,0,30,0,0,0,,,,2015-04-08 15:00,2015-04-12 15:00,,2014-09-10 07:00,2014-09-13 17:00,2014-09-10 07:00,2014-09-13 17:00,2014-09-10 07:00,2014-09-13 17:00,2015-04-08 15:00,2015-04-12 15:00,,PT_Normal,,,,,D+6FmUk9EEakx+f0boBPvg,ijk2eLNRMEC144yLUL6bbw,,,N,0,0,,,2014-04-13 07:21,2014-04-14 15:33,admin,admin,
2411,142508,6971,40220,7842,0,N,N,N,CP_Phys,TT_Task,DT_FixedDrtn,TK_NotStart,CZA-TK-0715-1590,Inspection,8374,1808,0,10,0,0,0,10,0,0,0,,,,2015-04-12 15:00,2015-04-13 15:00,,2014-09-14 07:00,2014-09-14 17:00,2014-09-14 07:00,2014-09-14 17:00,2014-09-14 07:00,2014-09-14 17:00,2015-04-12 15:00,2015-04-13 15:00,,PT_Normal,,,,,RayoX0PoBEWf/a1cBAvZTg,vCLAhVTvHUmmakvP69zRKg,,,N,0,0,,,2014-04-13 07:21,2014-04-14 15:33,admin,admin,
2412,142509,6971,40150,7842,0,N,N,N,CP_Phys,TT_Task,DT_FixedDrtn,TK_NotStart,CZA-TK-0715-2160,Laying and Fit-up,8374,1808,0,30,0,0,0,30,60,0,60,,,,2015-01-08 15:00,2015-01-12 15:00,,2014-06-12 07:00,2014-06-15 17:00,2014-06-12 07:00,2014-06-15 17:00,2014-06-12 07:00,2014-06-15 17:00,2015-01-08 15:00,2015-01-12 15:00,,PT_Normal,,,,,z1ZgWukUo0CBBKUfVuX2uA,rjuinqAs90i9LSXpnkn8rQ,,,N,0,0,,,2014-04-13 07:21,2014-04-14 15:33,admin,admin,
2413,142510,6971,40150,7842,0,N,N,N,CP_Phys,TT_Task,DT_FixedDrtn,TK_NotStart,CZA-TK-0715-2170,Welding,8374,1808,0,60,0,0,0,60,120,0,120,,,,2015-01-12 15:00,2015-01-19 15:00,,2014-06-16 07:00,2014-06-22 17:00,2014-06-16 07:00,2014-06-22 17:00,2014-06-16 07:00,2014-06-22 17:00,2015-01-12 15:00,2015-01-19 15:00,,PT_Normal,,,,,bz2LZ9hjnkC+rQ9T5cKjZw,ZeBvo1lPYE6PjCA8j3+p7A,,,N,0,0,,,2014-04-13 07:21,2014-04-14 15:33,admin,admin,
2414,142511,6971,40150,7842,0,N,N,N,CP_Phys,TT_Task,DT_FixedDrtn,TK_NotStart,CZA-TK-0715-2180,Inspection,8374,1808,0,90,0,0,0,90,0,0,0,,,,2015-01-08 15:00,2015-01-19 15:00,,2014-06-12 07:00,2014-06-22 17:00,2014-06-12 07:00,2014-06-22 17:00,2014-06-12 07:00,2014-06-22 17:00,2015-01-08 15:00,2015-01-19 15:00,,PT_Normal,,,,,rZfGNVtolkmqnV4Fj8HrwA,sZu5SiW3fUGjqDFEXHH4hg,,,N,0,0,,,2014-04-13 07:21,2014-04-14 15:33,admin,admin,
2415,142512,6971,40322,7842,0,N,N,N,CP_Phys,TT_Task,DT_FixedDrtn,TK_NotStart,CZA-TK-0715-1870,Welding,8374,1808,0,20,0,143.809016,143.809016,20,60,0,60,,,,2014-10-26 15:00,2014-10-28 15:00,,2014-03-30 07:00,2014-03-31 17:00,2014-03-30 07:00,2014-03-31 17:00,2014-03-30 07:00,2014-03-31 17:00,2014-10-26 15:00,2014-10-28 15:00,,PT_Normal,,,,,wuKG3+SkbkynVfLKK3OFuw,AS0O7LH2T0Wf/cMnQBx0Ew,,,N,0,0,,,2014-04-13 07:21,2014-04-14 15:33,admin,admin,
2416,142513,6971,40322,7842,0,N,N,N,CP_Phys,TT_Task,DT_FixedDrtn,TK_NotStart,CZA-TK-0715-1880,Inspection,8374,1808,0,30,0,28.761803,28.761803,30,0,0,0,,,,2014-10-25 15:00,2014-10-28 15:00,,2014-03-29 07:00,2014-03-31 17:00,2014-03-29 07:00,2014-03-31 17:00,2014-03-29 07:00,2014-03-31 17:00,2014-10-25 15:00,2014-10-28 15:00,,PT_Normal,,,,,XohMCkx1G0ycTUHKqMk35A,lgsCz4xtQkmrMUVI18fZyA,,,N,0,0,,,2014-04-13 07:21,2014-04-14 15:33,admin,admin,
2417,142514,6971,40322,7842,0,N,N,N,CP_Phys,TT_Task,DT_FixedDrtn,TK_NotStart,CZA-TK-0715-1860,Laying and Fit-up,8374,1808,0,10,0,115.047213,115.047213,10,20,0,20,,,,2014-10-25 15:00,2014-10-26 15:00,,2014-03-29 07:00,2014-03-29 17:00,2014-03-29 07:00,2014-03-29 17:00,2014-03-29 07:00,2014-03-29 17:00,2014-10-25 15:00,2014-10-26 15:00,,PT_Normal,,,,,LhhExdrPRUiV5nOqcG3Fzw,+cMc7+Dr50WdPMzfHLfy4g,,,N,0,0,,,2014-04-13 07:21,2014-04-14 15:33,admin,admin,
2418,142515,6971,40323,7842,0,N,N,N,CP_Phys,TT_Task,DT_FixedDrtn,TK_NotStart,CZA-TK-0715-1550,Erection and Fit-up,8374,1808,0,20,0,0,0,20,40,0,40,,,,2015-03-31 15:00,2015-04-02 15:00,,2014-09-02 07:00,2014-09-03 17:00,2014-09-02 07:00,2014-09-03 17:00,2014-09-02 07:00,2014-09-03 17:00,2015-03-31 15:00,2015-04-02 15:00,,PT_Normal,,,,,Kp1IK8sU2E6xArdU4S3uxw,q8w7O6Jrh0+Wd+GvT1KLfw,,,N,0,0,,,2014-04-13 07:21,2014-04-14 15:33,admin,admin,
2419,142516,6971,40323,7842,0,N,N,N,CP_Phys,TT_Task,DT_FixedDrtn,TK_NotStart,CZA-TK-0715-1560,Welding,8374,1808,0,50,0,0,0,50,100,0,100,,,,2015-04-02 15:00,2015-04-08 15:00,,2014-09-04 07:00,2014-09-09 17:00,2014-09-04 07:00,2014-09-09 17:00,2014-09-04 07:00,2014-09-09 17:00,2015-04-02 15:00,2015-04-08 15:00,,PT_Normal,,,,,ONIxjj/icECMfImq2FWUpA,X/wb/uVRZ06JPFJKz+slIA,,,N,0,0,,,2014-04-13 07:21,2014-04-14 15:33,admin,admin,
2420,142517,6971,40323,7842,0,N,N,N,CP_Phys,TT_Task,DT_FixedDrtn,TK_NotStart,CZA-TK-0715-1570,Inspection,8374,1808,0,70,0,0,0,70,0,0,0,,,,2015-03-31 15:00,2015-04-08 15:00,,2014-09-02 07:00,2014-09-09 17:00,2014-09-02 07:00,2014-09-09 17:00,2014-09-02 07:00,2014-09-09 17:00,2015-03-31 15:00,2015-04-08 15:00,,PT_Normal,,,,,kdYPJk5XSEOtHsF1YX265g,WJQVdbPpzkWhOLFfbr40jQ,,,N,0,0,,,2014-04-13 07:21,2014-04-14 15:33,admin,admin,
2421,142518,6971,40324,7842,0,N,N,N,CP_Phys,TT_Task,DT_FixedDrtn,TK_NotStart,CZA-TK-0715-2130,Laying and Fit-up,8374,1808,0,30,0,0,0,30,60,0,60,,,,2014-12-28 15:00,2014-12-31 15:00,,2014-06-01 07:00,2014-06-03 17:00,2014-06-01 07:00,2014-06-03 17:00,2014-06-01 07:00,2014-06-03 17:00,2014-12-28 15:00,2014-12-31 15:00,,PT_Normal,,,,,fWf4lu7UhU6+QUOqpsEVjA,UTvkb2bk6UGUQbDhkNtMqQ,,,N,0,0,,,2014-04-13 07:21,2014-04-14 15:33,admin,admin,
2422,142519,6971,40324,7842,0,N,N,N,CP_Phys,TT_Task,DT_FixedDrtn,TK_NotStart,CZA-TK-0715-2140,Welding,8374,1808,0,70,0,0,0,70,140,0,140,,,,2014-12-31 15:00,2015-01-08 15:00,,2014-06-04 07:00,2014-06-11 17:00,2014-06-04 07:00,2014-06-11 17:00,2014-06-04 07:00,2014-06-11 17:00,2014-12-31 15:00,2015-01-08 15:00,,PT_Normal,,,,,4Q1g/FO8nUCbv/lK5pSJNw,uDg1Haflqku+79vbpTGi+w,,,N,0,0,,,2014-04-13 07:21,2014-04-14 15:33,admin,admin,
2423,142520,6971,40324,7842,0,N,N,N,CP_Phys,TT_Task,DT_FixedDrtn,TK_NotStart,CZA-TK-0715-2150,Inspection,8374,1808,0,100,0,0,0,100,0,0,0,,,,2014-12-28 15:00,2015-01-08 15:00,,2014-06-01 07:00,2014-06-11 17:00,2014-06-01 07:00,2014-06-11 17:00,2014-06-01 07:00,2014-06-11 17:00,2014-12-28 15:00,2015-01-08 15:00,,PT_Normal,,,,,I7yIl9GtPE66wfreFghgmQ,CgHiiVjJ4UWyiWssrnq3cA,,,N,0,0,,,2014-04-13 07:21,2014-04-14 15:33,admin,admin,
2424,142521,6971,40325,7842,0,N,N,N,CP_Phys,TT_Task,DT_FixedDrtn,TK_NotStart,CZA-TK-0715-1890,Laying and Fit-up,8374,1808,0,10,0,308.761241,308.761241,10,20,0,20,,,,2014-10-28 15:00,2014-10-29 15:00,,2014-04-01 07:00,2014-04-01 17:00,2014-04-01 07:00,2014-04-01 17:00,2014-04-01 07:00,2014-04-01 17:00,2014-10-28 15:00,2014-10-29 15:00,,PT_Normal,,,,,puTkbqD6b0yRneCQ0IuR/Q,t2uBD1J4SU2mvAI8jnigfA,,,N,0,0,,,2014-04-13 07:21,2014-04-14 15:33,admin,admin,
2425,142522,6971,40325,7842,0,N,N,N,CP_Phys,TT_Task,DT_FixedDrtn,TK_NotStart,CZA-TK-0715-1900,Welding,8374,1808,0,20,0,385.951551,385.951551,20,40,0,40,,,,2014-10-29 15:00,2014-11-01 15:00,,2014-04-02 07:00,2014-04-03 17:00,2014-04-02 07:00,2014-04-03 17:00,2014-04-02 07:00,2014-04-03 17:00,2014-10-29 15:00,2014-11-01 15:00,,PT_Normal,,,,,rkizhzeMjUO+xtS2O9NgFw,+/gvbiBuk0ynMZ6qYNTK7w,,,N,0,0,,,2014-04-13 07:21,2014-04-15 08:10,admin,admin,
2426,142523,6971,40325,7842,0,N,N,N,CP_Phys,TT_Task,DT_FixedDrtn,TK_NotStart,CZA-TK-0715-1910,Inspection,8374,1808,0,30,0,77.19031,77.19031,30,0,0,0,,,,2014-10-28 15:00,2014-11-01 15:00,,2014-04-01 07:00,2014-04-03 17:00,2014-04-01 07:00,2014-04-03 17:00,2014-04-01 07:00,2014-04-03 17:00,2014-10-28 15:00,2014-11-01 15:00,,PT_Normal,,,,,l+N4WsAaTEKA4clC0xjnjA,c3TDm/7Awkma/xfEQHHIGA,,,N,0,0,,,2014-04-13 07:21,2014-04-14 15:33,admin,admin,
2427,142524,6971,40008,7842,0,N,N,N,CP_Phys,TT_Mile,DT_FixedDrtn,TK_NotStart,CZA-TK-0715-1850,Foundation Takeover from Client,,0,0,0,0,0,0,0,0,0,0,2014-03-28 00:00,,,2014-03-27 17:00,2014-03-27 17:00,,2014-03-29 07:00,2014-03-29 07:00,2014-03-29 07:00,2014-03-29 07:00,2014-03-29 07:00,2014-03-29 07:00,2014-03-27 17:00,2014-03-27 17:00,CS_MSO,PT_Normal,,,,,ZWsYzgpz0k2eGXOfgZO5Yw,bTCkPARGYECdfoug20Ipqw,,,N,0,0,,,2014-04-13 07:21,2014-04-13 07:42,admin,admin,
2428,142525,6971,39947,7842,0,N,N,N,CP_Phys,TT_Task,DT_FixedDrtn,TK_NotStart,CZA-TK-0715-1610,"Blasting and Painting of Bottom, Shell and Roof (Inside and Outside)",8374,1898,0,190,0,3133.86,3133.86,190,380,0,380,,,,2015-05-28 15:00,2015-06-20 15:00,,2014-10-20 07:00,2014-11-10 17:00,2014-10-20 07:00,2014-11-10 17:00,2014-10-20 07:00,2014-11-10 17:00,2015-05-28 15:00,2015-06-20 15:00,,PT_Normal,,,,,LilkVmQabU+A6uQdUNFmpQ,S5sK5XT5+kKtA08COCKcDA,,,N,0,0,,,2014-04-13 07:21,2014-04-14 15:35,admin,admin,
2429,142526,6971,39911,7842,0,N,N,N,CP_Phys,TT_Task,DT_FixedDUR2,TK_NotStart,CZA-2570,AZ Handover to Client,,778,778,8,0,0,0,8,0,0,0,,,,2015-06-28 15:00,2015-06-29 13:00,,2015-03-30 07:00,2015-03-30 15:00,2015-03-30 07:00,2015-03-30 15:00,2015-03-30 07:00,2015-03-30 15:00,2015-06-28 15:00,2015-06-29 13:00,,PT_Normal,,,,,ZvLJe774s0y182WKn6GWdw,,,,N,0,0,,,2014-04-13 07:21,2014-04-13 08:09,admin,admin,
2430,142527,6971,39912,7842,0,N,N,N,CP_Phys,TT_Task,DT_FixedDUR2,TK_NotStart,CZA-2560,AZ Handover to Client,,0,0,8,0,0,0,8,0,0,0,,,,2015-06-28 15:00,2015-06-29 13:00,,2015-06-28 15:00,2015-06-29 13:00,2015-06-28 15:00,2015-06-29 13:00,2015-06-28 15:00,2015-06-29 13:00,2015-06-28 15:00,2015-06-29 13:00,,PT_Normal,,,,,+tGMV8WBs0aHOxzzOtJqiQ,,,,Y,0,0,,,2014-04-13 07:21,2014-04-13 08:09,admin,admin,
2431,142528,6971,39913,7842,0,N,N,N,CP_Phys,TT_Task,DT_FixedDrtn,TK_NotStart,CZA-2540,AZ Handover to Client,,832,832,8,0,0,0,8,0,0,0,,,,2015-06-28 15:00,2015-06-29 13:00,,2015-03-23 13:00,2015-03-24 11:00,2015-03-23 13:00,2015-03-24 11:00,2015-03-23 13:00,2015-03-24 11:00,2015-06-28 15:00,2015-06-29 13:00,,PT_Normal,,,,,H2vtcyPVDU++fqhnXUw6yQ,,,,N,0,0,,,2014-04-13 07:21,2014-04-13 08:09,admin,admin,
2432,142529,6971,39905,7842,0,N,N,N,CP_Phys,TT_Task,DT_FixedDUR2,TK_NotStart,CZA-2550,AZ Handover to Client,,1512,1512,8,0,0,0,8,0,0,0,,,,2015-06-28 15:00,2015-06-29 13:00,,2015-01-03 13:00,2015-01-04 11:00,2015-01-03 13:00,2015-01-04 11:00,2015-01-03 13:00,2015-01-04 11:00,2015-06-28 15:00,2015-06-29 13:00,,PT_Normal,,,,,AtMgjf3Cskaee8YiyaQ0hA,,,,N,0,0,,,2014-04-13 07:21,2014-04-13 08:09,admin,admin,
2433,142530,6971,39955,7842,0,N,N,N,CP_Phys,TT_Task,DT_FixedDrtn,TK_NotStart,CZA-TK-3490-2720,"Blasting and Painting of Bottom, Shell and Roof (Inside and Outside)",8406,978,0,100,0,982.038282,982.038282,100,300,0,300,,,,2015-06-08 15:00,2015-06-20 15:00,,2015-02-15 07:00,2015-02-25 17:00,2015-02-15 07:00,2015-02-25 17:00,2015-02-15 07:00,2015-02-25 17:00,2015-06-08 15:00,2015-06-20 15:00,,PT_Normal,,,,,OVbjbsFL8kyLh8+Cw3gCtA,FbEbpu5BlU6lkVh+vYpo2g,,,N,0,0,,,2014-04-13 07:21,2014-04-14 16:04,admin,admin,
2434,142531,6971,39959,7842,0,N,N,N,CP_Phys,TT_Mile,DT_FixedDrtn,TK_NotStart,CZA-TK-3490-2220,Foundation Takeover from Client,,0,0,0,0,0,0,0,0,0,0,2014-04-10 00:00,,,2014-04-09 17:00,2014-04-09 17:00,,2014-04-10 07:00,2014-04-10 07:00,2014-04-10 07:00,2014-04-10 07:00,2014-04-10 07:00,2014-04-10 07:00,2014-04-09 17:00,2014-04-09 17:00,CS_MSO,PT_Normal,,,,,jvak2R8UhUeR+Ch2aLnTaQ,bp+UziD2nkCdjeH3heehkA,,,N,0,0,,,2014-04-13 07:21,2014-04-13 07:42,admin,admin,
2435,142532,6971,40028,7842,0,N,N,N,CP_Phys,TT_Task,DT_FixedDrtn,TK_NotStart,CZA-TK-3490-2710,"Filling, Holding and Draining of Water",8406,978,0,170,0,1636.73047,1636.73047,170,0,0,0,,,,2015-05-19 15:00,2015-06-08 15:00,,2015-01-26 07:00,2015-02-14 17:00,2015-01-26 07:00,2015-02-14 17:00,2015-01-26 07:00,2015-02-14 17:00,2015-05-19 15:00,2015-06-08 15:00,,PT_Normal,,,,,NgeroX8JKUaX+d+Mjo70yA,2VuBgeZaC02vqDsyZKyxwA,,,N,0,0,,,2014-04-13 07:21,2014-04-14 16:04,admin,admin,
2436,142533,6971,40239,7842,0,N,N,N,CP_Phys,TT_Task,DT_FixedDrtn,TK_NotStart,CZA-TK-3490-2620,Installation and Fit-up,8406,2060,0,40,0,0,0,40,120,0,120,,,,2015-04-08 15:00,2015-04-13 15:00,,2014-08-11 15:00,2014-08-16 15:00,2014-08-11 15:00,2014-08-16 15:00,2014-08-11 15:00,2014-08-16 15:00,2015-04-08 15:00,2015-04-13 15:00,,PT_Normal,,,,,Rx1yWPidlkSAPDexfJQn6Q,WQ8cQYyUpEeJkWUfXERRvQ,,,N,0,0,,,2014-04-13 07:21,2014-04-14 16:04,admin,admin,
2437,142534,6971,40239,7842,0,N,N,N,CP_Phys,TT_Task,DT_FixedDrtn,TK_NotStart,CZA-TK-3490-2630,Welding,8406,2060,0,60,0,0,0,60,300,0,300,,,,2015-04-13 15:00,2015-04-20 15:00,,2014-08-16 15:00,2014-08-23 15:00,2014-08-16 15:00,2014-08-23 15:00,2014-08-16 15:00,2014-08-23 15:00,2015-04-13 15:00,2015-04-20 15:00,,PT_Normal,,,,,cmEKbttT806Wo/+45O2Qxg,Y1tr5HfrKUqjfREVrfbWjQ,,,N,0,0,,,2014-04-13 07:21,2014-04-14 16:04,admin,admin,
2438,142535,6971,40239,7842,0,N,N,N,CP_Phys,TT_Task,DT_FixedDrtn,TK_NotStart,CZA-TK-3490-2640,Inspection,8406,2060,0,100,0,0,0,100,0,0,0,,,,2015-04-08 15:00,2015-04-20 15:00,,2014-08-11 15:00,2014-08-23 15:00,2014-08-11 15:00,2014-08-23 15:00,2014-08-11 15:00,2014-08-23 15:00,2015-04-08 15:00,2015-04-20 15:00,,PT_Normal,,,,,5c+YOLCyUEWR6I80NkDJZQ,mDc8nw9XoEu9fuFRiGfkNw,,,N,0,0,,,2014-04-13 07:21,2014-04-14 16:04,admin,admin,
2439,142536,6971,40240,7842,0,N,N,N,CP_Phys,TT_Task,DT_FixedDrtn,TK_NotStart,CZA-TK-3490-2650,Erection and Fit-up,8406,2060,0,50,0,0,0,50,150,0,150,,,,2015-04-20 15:00,2015-04-26 15:00,,2014-08-23 15:00,2014-08-28 15:00,2014-08-23 15:00,2014-08-28 15:00,2014-08-23 15:00,2014-08-28 15:00,2015-04-20 15:00,2015-04-26 15:00,,PT_Normal,,,,,G33jMg4S7UWD03+P1jjUhA,8RWdYbM96ECDM4DPsloxCg,,,N,0,0,,,2014-04-13 07:21,2014-04-14 16:04,admin,admin,
2440,142537,6971,40240,7842,0,N,N,N,CP_Phys,TT_Task,DT_FixedDrtn,TK_NotStart,CZA-TK-3490-2660,Welding,8406,2060,0,120,0,0,0,120,600,0,600,,,,2015-04-26 15:00,2015-05-10 15:00,,2014-08-28 15:00,2014-09-11 15:00,2014-08-28 15:00,2014-09-11 15:00,2014-08-28 15:00,2014-09-11 15:00,2015-04-26 15:00,2015-05-10 15:00,,PT_Normal,,,,,ebRRzPykYU24pY1vqtTHxQ,lZHL6cEGqEa8C8rnrxR7uQ,,,N,0,0,,,2014-04-13 07:21,2014-04-14 16:04,admin,admin,
2441,142538,6971,40240,7842,0,N,N,N,CP_Phys,TT_Task,DT_FixedDrtn,TK_NotStart,CZA-TK-3490-2670,Inspection,8406,2060,0,170,0,0,0,170,0,0,0,,,,2015-04-20 15:00,2015-05-10 15:00,,2014-08-23 15:00,2014-09-11 15:00,2014-08-23 15:00,2014-09-11 15:00,2014-08-23 15:00,2014-09-11 15:00,2015-04-20 15:00,2015-05-10 15:00,,PT_Normal,,,,,wUtBn0e7t0uXm0fPYsNsvQ,M5SXcwZEnEyXU4+0YlYJew,,,N,0,0,,,2014-04-13 07:21,2014-04-14 16:04,admin,admin,
2442,142539,6971,40241,7842,0,N,N,N,CP_Phys,TT_Task,DT_FixedDrtn,TK_NotStart,CZA-TK-3490-2680,Erection and Fit-up,8406,2060,0,50,0,0,0,50,150,0,150,,,,2015-04-29 15:00,2015-05-05 15:00,,2014-09-01 15:00,2014-09-07 15:00,2014-09-01 15:00,2014-09-07 15:00,2014-09-01 15:00,2014-09-07 15:00,2015-04-29 15:00,2015-05-05 15:00,,PT_Normal,,,,,PYGTO0K580Kf9/7ON2Tsxg,i7dFXDZIWEKM5WIK7CDkPQ,,,N,0,0,,,2014-04-13 07:21,2014-04-14 16:04,admin,admin,
2443,142540,6971,40241,7842,0,N,N,N,CP_Phys,TT_Task,DT_FixedDrtn,TK_NotStart,CZA-TK-3490-2690,Welding,8406,2060,0,120,0,0,0,120,600,0,600,,,,2015-05-05 15:00,2015-05-19 15:00,,2014-09-07 15:00,2014-09-21 15:00,2014-09-07 15:00,2014-09-21 15:00,2014-09-07 15:00,2014-09-21 15:00,2015-05-05 15:00,2015-05-19 15:00,,PT_Normal,,,,,zCDDzXqL0UqajSV9BrXu2g,bKgUWHLlMUKuJliixTfGxA,,,N,0,0,,,2014-04-13 07:21,2014-04-14 16:04,admin,admin,
2444,142541,6971,40241,7842,0,N,N,N,CP_Phys,TT_Task,DT_FixedDrtn,TK_NotStart,CZA-TK-3490-2700,Inspection,8406,2060,1082,170,0,0,0,170,0,0,0,,,,2015-04-29 15:00,2015-05-19 15:00,,2014-09-01 15:00,2014-09-21 15:00,2014-09-01 15:00,2014-09-21 15:00,2014-09-01 15:00,2014-09-21 15:00,2015-04-29 15:00,2015-05-19 15:00,,PT_Normal,,,,,eVD9vqnAgE2KQ2SPWxUiIg,qKRT+2Lwv0ayHMr3/DXHWw,,,N,0,0,,,2014-04-13 07:21,2014-04-14 16:04,admin,admin,
2445,142542,6971,40242,7842,0,N,N,N,CP_Phys,TT_Task,DT_FixedDrtn,TK_NotStart,CZA-TK-3490-2410,Erection and Fit-up,8406,2060,0,10,0,90.275289,90.275289,10,30,0,30,,,,2015-02-02 15:00,2015-02-03 15:00,,2014-06-07 15:00,2014-06-08 15:00,2014-06-07 15:00,2014-06-08 15:00,2014-06-07 15:00,2014-06-08 15:00,2015-02-02 15:00,2015-02-03 15:00,,PT_Normal,,,,,ZTRE0edDr0KEa57HuAhRqQ,hwEA1p/4pkqScjWMzJSR8w,,,N,0,0,,,2014-04-13 07:21,2014-04-14 16:04,admin,admin,
2446,142543,6971,40242,7842,0,N,N,N,CP_Phys,TT_Task,DT_FixedDrtn,TK_NotStart,CZA-TK-3490-2420,Welding,8406,2060,0,70,0,112.844111,112.844111,70,420,0,420,,,,2015-02-03 15:00,2015-02-11 15:00,,2014-06-08 15:00,2014-06-16 15:00,2014-06-08 15:00,2014-06-16 15:00,2014-06-08 15:00,2014-06-16 15:00,2015-02-03 15:00,2015-02-11 15:00,,PT_Normal,,,,,SS7/wgg0uEmfPLiRb75Hiw,AaVICYBYCEWosGvnRqpe3w,,,N,0,0,,,2014-04-13 07:21,2014-04-14 16:04,admin,admin,
2447,142544,6971,40242,7842,0,N,N,N,CP_Phys,TT_Task,DT_FixedDrtn,TK_NotStart,CZA-TK-3490-2430,Inspection,8406,2060,0,80,0,22.568822,22.568822,80,0,0,0,,,,2015-02-02 15:00,2015-02-11 15:00,,2014-06-07 15:00,2014-06-16 15:00,2014-06-07 15:00,2014-06-16 15:00,2014-06-07 15:00,2014-06-16 15:00,2015-02-02 15:00,2015-02-11 15:00,,PT_Normal,,,,,v1nMSWW3y0OtMXElD8/6mg,QgVDlxp3oEiAIum3JFUX9A,,,N,0,0,,,2014-04-13 07:21,2014-04-14 16:04,admin,admin,
2448,142545,6971,40243,7842,0,N,N,N,CP_Phys,TT_Task,DT_FixedDrtn,TK_NotStart,CZA-TK-3490-2230,Laying and Fit-up,8406,2060,0,10,0,98.604392,98.604392,10,30,0,30,,,,2014-12-07 15:00,2014-12-08 15:00,,2014-04-10 15:00,2014-04-12 15:00,2014-04-10 15:00,2014-04-12 15:00,2014-04-10 15:00,2014-04-12 15:00,2014-12-07 15:00,2014-12-08 15:00,,PT_Normal,,,,,m4jNi+Nqa0OccTA/qoBb9A,uI/h07fKUEOGXd1u3s1y8g,,,N,0,0,,,2014-04-13 07:21,2014-04-14 16:04,admin,admin,
2449,142546,6971,40243,7842,0,N,N,N,CP_Phys,TT_Task,DT_FixedDrtn,TK_NotStart,CZA-TK-3490-2240,Welding,8406,2060,0,40,0,123.25549,123.25549,40,200,0,200,,,,2014-12-08 15:00,2014-12-13 15:00,,2014-04-12 15:00,2014-04-16 15:00,2014-04-12 15:00,2014-04-16 15:00,2014-04-12 15:00,2014-04-16 15:00,2014-12-08 15:00,2014-12-13 15:00,,PT_Normal,,,,,7M+AcICS/0qvJzJkjXqRaw,Uxi3ywbQ60KNAWNMgKMqvw,,,N,0,0,,,2014-04-13 07:21,2014-04-14 16:04,admin,admin,
2450,142547,6971,40243,7842,0,N,N,N,CP_Phys,TT_Task,DT_FixedDrtn,TK_NotStart,CZA-TK-3490-2250,Inspection,8406,2060,0,50,0,24.651098,24.651098,50,0,0,0,,,,2014-12-07 15:00,2014-12-13 15:00,,2014-04-10 15:00,2014-04-16 15:00,2014-04-10 15:00,2014-04-16 15:00,2014-04-10 15:00,2014-04-16 15:00,2014-12-07 15:00,2014-12-13 15:00,,PT_Normal,,,,,VJqsgVEucU6/VM4ozlMzyg,GWq6uvQv3USWwiPicQVrPw,,,N,0,0,,,2014-04-13 07:21,2014-04-14 16:04,admin,admin,
2451,142548,6971,40244,7842,0,N,N,N,CP_Phys,TT_Task,DT_FixedDrtn,TK_NotStart,CZA-TK-3490-2260,Erection and Fit-up,8406,2060,0,30,0,153.149379,153.149379,30,90,0,90,,,,2014-12-13 15:00,2014-12-16 15:00,,2014-04-16 15:00,2014-04-20 15:00,2014-04-16 15:00,2014-04-20 15:00,2014-04-16 15:00,2014-04-20 15:00,2014-12-13 15:00,2014-12-16 15:00,,PT_Normal,,,,,CSECB0uh5ESLdpaq1Vg30w,8MqHKtSctU+V9YWcrlZGww,,,N,0,0,,,2014-04-13 07:21,2014-04-14 16:04,admin,admin,
2452,142549,6971,40244,7842,0,N,N,N,CP_Phys,TT_Task,DT_FixedDrtn,TK_NotStart,CZA-TK-3490-2270,Welding,8406,2060,0,70,0,191.436724,191.436724,70,420,0,420,,,,2014-12-16 15:00,2014-12-24 15:00,,2014-04-20 15:00,2014-04-28 15:00,2014-04-20 15:00,2014-04-28 15:00,2014-04-20 15:00,2014-04-28 15:00,2014-12-16 15:00,2014-12-24 15:00,,PT_Normal,,,,,830CCsWW/UCYOl3dTcgmfA,lR0jbWL9GEyoKDdykZuaZg,,,N,0,0,,,2014-04-13 07:21,2014-04-14 16:04,admin,admin,
2453,142550,6971,40244,7842,0,N,N,N,CP_Phys,TT_Task,DT_FixedDrtn,TK_NotStart,CZA-TK-3490-2280,Inspection,8406,2060,0,100,0,38.287345,38.287345,100,0,0,0,,,,2014-12-13 15:00,2014-12-24 15:00,,2014-04-16 15:00,2014-04-28 15:00,2014-04-16 15:00,2014-04-28 15:00,2014-04-16 15:00,2014-04-28 15:00,2014-12-13 15:00,2014-12-24 15:00,,PT_Normal,,,,,T0rMDxslp0akQ7Aw1wESqQ,KfprM0VQp0eZje0BX+ILhg,,,N,0,0,,,2014-04-13 07:21,2014-04-14 16:04,admin,admin,
2454,142551,6971,40245,7842,0,N,N,N,CP_Phys,TT_Task,DT_FixedDrtn,TK_NotStart,CZA-TK-3490-2290,Erection and Fit-up,8406,2060,0,10,0,74.640425,74.640425,10,30,0,30,,,,2014-12-24 15:00,2014-12-25 15:00,,2014-04-28 15:00,2014-04-29 15:00,2014-04-28 15:00,2014-04-29 15:00,2014-04-28 15:00,2014-04-29 15:00,2014-12-24 15:00,2014-12-25 15:00,,PT_Normal,,,,,wsGWd4bA5EW10N0j3l7ZPA,OkYyz5P3YEiL9PWn0VHMeA,,,N,0,0,,,2014-04-13 07:21,2014-04-14 16:04,admin,admin,
2455,142552,6971,40245,7842,0,N,N,N,CP_Phys,TT_Task,DT_FixedDrtn,TK_NotStart,CZA-TK-3490-2300,Welding,8406,2060,0,70,0,93.300532,93.300532,70,420,0,420,,,,2014-12-25 15:00,2015-01-03 15:00,,2014-04-29 15:00,2014-05-07 15:00,2014-04-29 15:00,2014-05-07 15:00,2014-04-29 15:00,2014-05-07 15:00,2014-12-25 15:00,2015-01-03 15:00,,PT_Normal,,,,,BzO5OVq5vkO4vDlNY82ADw,X4us3xaVL0adevyCHfphFQ,,,N,0,0,,,2014-04-13 07:21,2014-04-14 16:04,admin,admin,
2456,142553,6971,40245,7842,0,N,N,N,CP_Phys,TT_Task,DT_FixedDrtn,TK_NotStart,CZA-TK-3490-2310,Inspection,8406,2060,0,80,0,18.660106,18.660106,80,0,0,0,,,,2014-12-24 15:00,2015-01-03 15:00,,2014-04-28 15:00,2014-05-07 15:00,2014-04-28 15:00,2014-05-07 15:00,2014-04-28 15:00,2014-05-07 15:00,2014-12-24 15:00,2015-01-03 15:00,,PT_Normal,,,,,XLVK4Dzp1k6dPFe3mpLMew,tKCvF8I/6USmOqityChaxw,,,N,0,0,,,2014-04-13 07:21,2014-04-14 16:04,admin,admin,
2457,142554,6971,40246,7842,0,N,N,N,CP_Phys,TT_Task,DT_FixedDrtn,TK_NotStart,CZA-TK-3490-2320,Erection and Fit-up,8406,2060,0,10,0,120.37931,120.37931,10,30,0,30,,,,2015-01-03 15:00,2015-01-04 15:00,,2014-05-07 15:00,2014-05-08 15:00,2014-05-07 15:00,2014-05-08 15:00,2014-05-07 15:00,2014-05-08 15:00,2015-01-03 15:00,2015-01-04 15:00,,PT_Normal,,,,,e4RnLG3rG0SLe5m6rt6zjQ,q1aNh2RUikeavLwgTxD+6A,,,N,0,0,,,2014-04-13 07:21,2014-04-14 16:04,admin,admin,
2458,142555,6971,40246,7842,0,N,N,N,CP_Phys,TT_Task,DT_FixedDrtn,TK_NotStart,CZA-TK-3490-2330,Welding,8406,2060,0,70,0,150.474137,150.474137,70,420,0,420,,,,2015-01-04 15:00,2015-01-12 15:00,,2014-05-08 15:00,2014-05-17 15:00,2014-05-08 15:00,2014-05-17 15:00,2014-05-08 15:00,2014-05-17 15:00,2015-01-04 15:00,2015-01-12 15:00,,PT_Normal,,,,,X5/BL2/3vUOtTtkrad6Ceg,hWkpRGTITEOvpRmVU3RSgw,,,N,0,0,,,2014-04-13 07:21,2014-04-14 16:04,admin,admin,
2459,142556,6971,40246,7842,0,N,N,N,CP_Phys,TT_Task,DT_FixedDrtn,TK_NotStart,CZA-TK-3490-2340,Inspection,8406,2060,0,80,0,30.094827,30.094827,80,0,0,0,,,,2015-01-03 15:00,2015-01-12 15:00,,2014-05-07 15:00,2014-05-17 15:00,2014-05-07 15:00,2014-05-17 15:00,2014-05-07 15:00,2014-05-17 15:00,2015-01-03 15:00,2015-01-12 15:00,,PT_Normal,,,,,3DTeJae0X0Oc4n4sTWNBcQ,J0HostK4oEugWRuqVtBdQQ,,,N,0,0,,,2014-04-13 07:21,2014-04-14 16:04,admin,admin,
2460,142557,6971,40247,7842,0,N,N,N,CP_Phys,TT_Task,DT_FixedDrtn,TK_NotStart,CZA-TK-3490-2350,"Cutting, Installation and Fit-up",8406,2060,0,20,0,0,0,20,60,0,60,,,,2015-01-12 15:00,2015-01-14 15:00,,2014-05-17 15:00,2014-05-19 15:00,2014-05-17 15:00,2014-05-19 15:00,2014-05-17 15:00,2014-05-19 15:00,2015-01-12 15:00,2015-01-14 15:00,,PT_Normal,,,,,y69z8uQEAkO0FNc7sbdp9w,NmrTVTzBika8mAJEHI4i/w,,,N,0,0,,,2014-04-13 07:21,2014-04-14 16:04,admin,admin,
2461,142558,6971,40247,7842,0,N,N,N,CP_Phys,TT_Task,DT_FixedDrtn,TK_NotStart,CZA-TK-3490-2360,Welding,8406,2060,0,80,0,0,0,80,400,0,400,,,,2015-01-14 15:00,2015-01-24 15:00,,2014-05-19 15:00,2014-05-28 15:00,2014-05-19 15:00,2014-05-28 15:00,2014-05-19 15:00,2014-05-28 15:00,2015-01-14 15:00,2015-01-24 15:00,,PT_Normal,,,,,3L13xrmPxEeqfi727AFq7w,MbqM8emjvUeVLAynT0ti/A,,,N,0,0,,,2014-04-13 07:21,2014-04-14 16:04,admin,admin,
2462,142559,6971,40247,7842,0,N,N,N,CP_Phys,TT_Task,DT_FixedDrtn,TK_NotStart,CZA-TK-3490-2370,Inspection,8406,2060,0,100,0,0,0,100,0,0,0,,,,2015-01-12 15:00,2015-01-24 15:00,,2014-05-17 15:00,2014-05-28 15:00,2014-05-17 15:00,2014-05-28 15:00,2014-05-17 15:00,2014-05-28 15:00,2015-01-12 15:00,2015-01-24 15:00,,PT_Normal,,,,,63BBa8LtHEO/dUUsmczypQ,QzVOQ8H/Q0W/jgkXnGyklA,,,N,0,0,,,2014-04-13 07:21,2014-04-14 16:04,admin,admin,
2463,142560,6971,40348,7842,0,N,N,N,CP_Phys,TT_Task,DT_FixedDrtn,TK_NotStart,CZA-TK-3490-2380,Erection and Fit-up,8406,2060,0,10,0,105.325986,105.325986,10,30,0,30,,,,2015-01-24 15:00,2015-01-25 15:00,,2014-05-28 15:00,2014-05-29 15:00,2014-05-28 15:00,2014-05-29 15:00,2014-05-28 15:00,2014-05-29 15:00,2015-01-24 15:00,2015-01-25 15:00,,PT_Normal,,,,,2xpSm72cjE+UqgbzZ8LtRQ,mpdB06Zdck6AbSJEgv/Ngg,,,N,0,0,,,2014-04-13 07:21,2014-04-14 16:04,admin,admin,
2464,142561,6971,40348,7842,0,N,N,N,CP_Phys,TT_Task,DT_FixedDrtn,TK_NotStart,CZA-TK-3490-2390,Welding,8406,2060,0,70,0,131.657483,131.657483,70,420,0,420,,,,2015-01-25 15:00,2015-02-02 15:00,,2014-05-29 15:00,2014-06-07 15:00,2014-05-29 15:00,2014-06-07 15:00,2014-05-29 15:00,2014-06-07 15:00,2015-01-25 15:00,2015-02-02 15:00,,PT_Normal,,,,,JG9isER3L06LmKKP1ocR+g,5/1KJeoo9ke7+Y4Oba0Mmg,,,N,0,0,,,2014-04-13 07:21,2014-04-14 16:04,admin,admin,
2465,142562,6971,40348,7842,0,N,N,N,CP_Phys,TT_Task,DT_FixedDrtn,TK_NotStart,CZA-TK-3490-2400,Inspection,8406,2060,0,80,0,26.331497,26.331497,80,0,0,0,,,,2015-01-24 15:00,2015-02-02 15:00,,2014-05-28 15:00,2014-06-07 15:00,2014-05-28 15:00,2014-06-07 15:00,2014-05-28 15:00,2014-06-07 15:00,2015-01-24 15:00,2015-02-02 15:00,,PT_Normal,,,,,oM6gCWpJd0WyA51MAv9KkQ,vQeUd6qrA0++Me2R/idLwA,,,N,0,0,,,2014-04-13 07:21,2014-04-14 16:04,admin,admin,
2466,142563,6971,40349,7842,0,N,N,N,CP_Phys,TT_Task,DT_FixedDrtn,TK_NotStart,CZA-TK-3490-2440,Erection and Fit-up,8406,2060,0,10,0,30.092201,30.092201,10,30,0,30,,,,2015-02-11 15:00,2015-02-12 15:00,,2014-06-16 15:00,2014-06-17 15:00,2014-06-16 15:00,2014-06-17 15:00,2014-06-16 15:00,2014-06-17 15:00,2015-02-11 15:00,2015-02-12 15:00,,PT_Normal,,,,,faZ0ZNRKoUCUgpKpb9npLQ,CChypMA5Q0GURaacF8au6w,,,N,0,0,,,2014-04-13 07:21,2014-04-14 16:04,admin,admin,
2467,142564,6971,40349,7842,0,N,N,N,CP_Phys,TT_Task,DT_FixedDrtn,TK_NotStart,CZA-TK-3490-2450,Welding,8406,2060,0,70,0,37.615251,37.615251,70,420,0,420,,,,2015-02-12 15:00,2015-02-21 15:00,,2014-06-17 15:00,2014-06-25 15:00,2014-06-17 15:00,2014-06-25 15:00,2014-06-17 15:00,2014-06-25 15:00,2015-02-12 15:00,2015-02-21 15:00,,PT_Normal,,,,,HWUsvggqiEK3PDUuElyoZA,lD6aAxPBYUSFsGOa8A1g8g,,,N,0,0,,,2014-04-13 07:21,2014-04-14 16:04,admin,admin,
2468,142565,6971,40349,7842,0,N,N,N,CP_Phys,TT_Task,DT_FixedDrtn,TK_NotStart,CZA-TK-3490-2460,Inspection,8406,2060,0,80,0,7.52305,7.52305,80,0,0,0,,,,2015-02-11 15:00,2015-02-21 15:00,,2014-06-16 15:00,2014-06-25 15:00,2014-06-16 15:00,2014-06-25 15:00,2014-06-16 15:00,2014-06-25 15:00,2015-02-11 15:00,2015-02-21 15:00,,PT_Normal,,,,,DGQ7fQ9O0kuATTnizTzlqw,N09bE6MJgUaT23cq8XsF4Q,,,N,0,0,,,2014-04-13 07:21,2014-04-14 16:04,admin,admin,
2469,142566,6971,40350,7842,0,N,N,N,CP_Phys,TT_Task,DT_FixedDrtn,TK_NotStart,CZA-TK-3490-2470,Erection and Fit-up,8406,2060,0,10,0,92.406814,92.406814,10,30,0,30,,,,2015-02-21 15:00,2015-02-22 15:00,,2014-06-25 15:00,2014-06-26 15:00,2014-06-25 15:00,2014-06-26 15:00,2014-06-25 15:00,2014-06-26 15:00,2015-02-21 15:00,2015-02-22 15:00,,PT_Normal,,,,,PuBX+6Kc9kuQ5kM5VCfiYw,00VeZCbCD0umJMwnHe/A/A,,,N,0,0,,,2014-04-13 07:21,2014-04-14 16:04,admin,admin,
2470,142567,6971,40350,7842,0,N,N,N,CP_Phys,TT_Task,DT_FixedDrtn,TK_NotStart,CZA-TK-3490-2480,Welding,8406,2060,0,70,0,115.508518,115.508518,70,420,0,420,,,,2015-02-22 15:00,2015-03-02 15:00,,2014-06-26 15:00,2014-07-05 15:00,2014-06-26 15:00,2014-07-05 15:00,2014-06-26 15:00,2014-07-05 15:00,2015-02-22 15:00,2015-03-02 15:00,,PT_Normal,,,,,sLRyGSXo1020nIG4SwMk/g,URFxv0vJMESOZfuKJ0nArw,,,N,0,0,,,2014-04-13 07:21,2014-04-14 16:04,admin,admin,
2471,142568,6971,40350,7842,0,N,N,N,CP_Phys,TT_Task,DT_FixedDrtn,TK_NotStart,CZA-TK-3490-2490,Inspection,8406,2060,0,80,0,23.101704,23.101704,80,0,0,0,,,,2015-02-21 15:00,2015-03-02 15:00,,2014-06-25 15:00,2014-07-05 15:00,2014-06-25 15:00,2014-07-05 15:00,2014-06-25 15:00,2014-07-05 15:00,2015-02-21 15:00,2015-03-02 15:00,,PT_Normal,,,,,qixGel62REavSHTHJJiXvA,XhzPgdijhkyDpqClhrZG4g,,,N,0,0,,,2014-04-13 07:21,2014-04-14 16:04,admin,admin,
2472,142569,6971,40251,7842,0,N,N,N,CP_Phys,TT_Task,DT_FixedDrtn,TK_NotStart,CZA-TK-3490-2500,"Cutting, Installation and Fit-up",8406,2060,0,20,0,0,0,20,60,0,60,,,,2015-03-02 15:00,2015-03-04 15:00,,2014-07-05 15:00,2014-07-07 15:00,2014-07-05 15:00,2014-07-07 15:00,2014-07-05 15:00,2014-07-07 15:00,2015-03-02 15:00,2015-03-04 15:00,,PT_Normal,,,,,fl0balsfYEqj9DoA7pG0/Q,yfRIXZUVxEWPSDFnDWpVcw,,,N,0,0,,,2014-04-13 07:21,2014-04-14 16:04,admin,admin,
2473,142570,6971,40251,7842,0,N,N,N,CP_Phys,TT_Task,DT_FixedDrtn,TK_NotStart,CZA-TK-3490-2510,Welding,8406,2060,0,60,0,0,0,60,300,0,300,,,,2015-03-04 15:00,2015-03-11 15:00,,2014-07-07 15:00,2014-07-14 15:00,2014-07-07 15:00,2014-07-14 15:00,2014-07-07 15:00,2014-07-14 15:00,2015-03-04 15:00,2015-03-11 15:00,,PT_Normal,,,,,9AJ8YcgE1UOXJYQM7UtbaQ,FzTUYz0o+U6QZMshyM9UAA,,,N,0,0,,,2014-04-13 07:21,2014-04-14 16:04,admin,admin,
2474,142571,6971,40251,7842,0,N,N,N,CP_Phys,TT_Task,DT_FixedDrtn,TK_NotStart,CZA-TK-3490-2520,Inspection,8406,2060,0,80,0,0,0,80,0,0,0,,,,2015-03-02 15:00,2015-03-11 15:00,,2014-07-05 15:00,2014-07-14 15:00,2014-07-05 15:00,2014-07-14 15:00,2014-07-05 15:00,2014-07-14 15:00,2015-03-02 15:00,2015-03-11 15:00,,PT_Normal,,,,,GCX6tVnHgkWnk6d+XXz/Ow,c38kbV3+XE+TodIlfuElLw,,,N,0,0,,,2014-04-13 07:21,2014-04-14 16:04,admin,admin,
2475,142572,6971,40252,7842,0,N,N,N,CP_Phys,TT_Task,DT_FixedDrtn,TK_NotStart,CZA-TK-3490-2530,Erection and Fit-up,8406,2060,0,30,0,0,0,30,90,0,90,,,,2015-03-11 15:00,2015-03-15 15:00,,2014-07-14 15:00,2014-07-17 15:00,2014-07-14 15:00,2014-07-17 15:00,2014-07-14 15:00,2014-07-17 15:00,2015-03-11 15:00,2015-03-15 15:00,,PT_Normal,,,,,WDjiltpa8EyiTqaRH2MzEw,ricWiiz9402pnYnePqXOSA,,,N,0,0,,,2014-04-13 07:21,2014-04-14 16:04,admin,admin,
2476,142573,6971,40252,7842,0,N,N,N,CP_Phys,TT_Task,DT_FixedDrtn,TK_NotStart,CZA-TK-3490-2540,Welding,8406,2060,0,70,0,0,0,70,350,0,350,,,,2015-03-15 15:00,2015-03-23 15:00,,2014-07-17 15:00,2014-07-26 15:00,2014-07-17 15:00,2014-07-26 15:00,2014-07-17 15:00,2014-07-26 15:00,2015-03-15 15:00,2015-03-23 15:00,,PT_Normal,,,,,XGC1DrDVc0m7X1w5Bdtdbw,rx9I1jZCmEqUsoXH9XyEwQ,,,N,0,0,,,2014-04-13 07:21,2014-04-14 16:04,admin,admin,
2477,142574,6971,40252,7842,0,N,N,N,CP_Phys,TT_Task,DT_FixedDrtn,TK_NotStart,CZA-TK-3490-2550,Inspection,8406,2060,0,100,0,0,0,100,0,0,0,,,,2015-03-11 15:00,2015-03-23 15:00,,2014-07-14 15:00,2014-07-26 15:00,2014-07-14 15:00,2014-07-26 15:00,2014-07-14 15:00,2014-07-26 15:00,2015-03-11 15:00,2015-03-23 15:00,,PT_Normal,,,,,qoDD07Izo0CWPrIO+9xUog,Kf/lTIJsUk62Gz+jdqrgtg,,,N,0,0,,,2014-04-13 07:21,2014-04-14 16:04,admin,admin,
2478,142575,6971,40253,7842,0,N,N,N,CP_Phys,TT_Task,DT_FixedDrtn,TK_NotStart,CZA-TK-3490-2560,Laying and Fit-up,8406,2060,0,20,0,184.942335,184.942335,20,60,0,60,,,,2015-03-23 15:00,2015-03-25 15:00,,2014-07-26 15:00,2014-07-28 15:00,2014-07-26 15:00,2014-07-28 15:00,2014-07-26 15:00,2014-07-28 15:00,2015-03-23 15:00,2015-03-25 15:00,,PT_Normal,,,,,JLO1ANz6JkSBrWXvRR5GJQ,VugkrEAK3U+tbXU7QO2RvA,,,N,0,0,,,2014-04-13 07:21,2014-04-14 16:04,admin,admin,
2479,142576,6971,40253,7842,0,N,N,N,CP_Phys,TT_Task,DT_FixedDrtn,TK_NotStart,CZA-TK-3490-2570,Welding,8406,2060,0,50,0,231.177918,231.177918,50,250,0,250,,,,2015-03-25 15:00,2015-03-31 15:00,,2014-07-28 15:00,2014-08-03 15:00,2014-07-28 15:00,2014-08-03 15:00,2014-07-28 15:00,2014-08-03 15:00,2015-03-25 15:00,2015-03-31 15:00,,PT_Normal,,,,,bMGjws54aUSDVq5bPbrSTA,LCjxyGKUA0aFPk1miFUUKA,,,N,0,0,,,2014-04-13 07:21,2014-04-14 16:04,admin,admin,
2480,142577,6971,40253,7842,0,N,N,N,CP_Phys,TT_Task,DT_FixedDrtn,TK_NotStart,CZA-TK-3490-2580,Inspection,8406,2060,0,70,0,46.235584,46.235584,70,0,0,0,,,,2015-03-23 15:00,2015-03-31 15:00,,2014-07-26 15:00,2014-08-03 15:00,2014-07-26 15:00,2014-08-03 15:00,2014-07-26 15:00,2014-08-03 15:00,2015-03-23 15:00,2015-03-31 15:00,,PT_Normal,,,,,OjrQM9SJ4kyHMXZu9S7HXg,+k1f34HGgECzUFvkBEWhzA,,,N,0,0,,,2014-04-13 07:21,2014-04-14 16:04,admin,admin,
2481,142578,6971,40254,7842,0,N,N,N,CP_Phys,TT_Task,DT_FixedDrtn,TK_NotStart,CZA-TK-3490-2590,Laying and Fit-up,8406,2060,0,20,0,0,0,20,60,0,60,,,,2015-03-31 15:00,2015-04-02 15:00,,2014-08-03 15:00,2014-08-05 15:00,2014-08-03 15:00,2014-08-05 15:00,2014-08-03 15:00,2014-08-05 15:00,2015-03-31 15:00,2015-04-02 15:00,,PT_Normal,,,,,t2yqLlXtoky7DcWVsnc9jA,LsUlg2skNUOSaiflakhv4Q,,,N,0,0,,,2014-04-13 07:21,2014-04-14 16:04,admin,admin,
2482,142579,6971,40254,7842,0,N,N,N,CP_Phys,TT_Task,DT_FixedDrtn,TK_NotStart,CZA-TK-3490-2600,Welding,8406,2060,0,50,0,0,0,50,250,0,250,,,,2015-04-02 15:00,2015-04-08 15:00,,2014-08-05 15:00,2014-08-11 15:00,2014-08-05 15:00,2014-08-11 15:00,2014-08-05 15:00,2014-08-11 15:00,2015-04-02 15:00,2015-04-08 15:00,,PT_Normal,,,,,Tzsr9KuGWk2bIJn66q8y2w,U8Cty32M8UeAVj9Z05otxw,,,N,0,0,,,2014-04-13 07:21,2014-04-14 16:04,admin,admin,
2483,142580,6971,40254,7842,0,N,N,N,CP_Phys,TT_Task,DT_FixedDrtn,TK_NotStart,CZA-TK-3490-2610,Inspection,8406,2060,0,70,0,0,0,70,0,0,0,,,,2015-03-31 15:00,2015-04-08 15:00,,2014-08-03 15:00,2014-08-11 15:00,2014-08-03 15:00,2014-08-11 15:00,2014-08-03 15:00,2014-08-11 15:00,2015-03-31 15:00,2015-04-08 15:00,,PT_Normal,,,,,kLE4G+6ws0SkVmuCpPgfRQ,reMMT2oYwEuAPXlHCGchCQ,,,N,0,0,,,2014-04-13 07:21,2014-04-14 16:04,admin,admin,
2484,142581,6971,39956,7842,0,N,N,N,CP_Phys,TT_Task,DT_FixedDrtn,TK_NotStart,CZA-TK-3490-2730,Tank Calibration,8406,978,0,50,0,327.346094,327.346094,50,0,0,0,,,,2015-06-20 15:00,2015-06-25 15:00,,2015-02-26 07:00,2015-03-03 17:00,2015-02-26 07:00,2015-03-03 17:00,2015-02-26 07:00,2015-03-03 17:00,2015-06-20 15:00,2015-06-25 15:00,,PT_Normal,,,,,cASz64gFAkOJxrQEhrso+w,LkeqixFOz0mKrSzoylmAuA,,,N,0,0,,,2014-04-13 07:21,2014-04-14 16:04,admin,admin,
2485,142582,6971,39956,7842,0,N,N,N,CP_Phys,TT_Task,DT_FixedDrtn,TK_NotStart,CZA-TK-3490-2740,Tank Handover,8406,978,200,20,0,327.346094,327.346094,20,0,0,0,,,,2015-06-25 15:00,2015-06-28 15:00,,2015-03-04 07:00,2015-03-05 17:00,2015-03-04 07:00,2015-03-05 17:00,2015-03-04 07:00,2015-03-05 17:00,2015-06-25 15:00,2015-06-28 15:00,,PT_Normal,,,,,enC25yhoyUeJOB3UZUHQaw,iBf9AAN4NUSmMlIGGGwFEQ,,,N,0,0,,,2014-04-13 07:21,2014-04-14 16:04,admin,admin,
2486,142583,6971,39938,7842,0,N,N,N,CP_Phys,TT_Task,DT_FixedDrtn,TK_NotStart,CZA-TK-3490-2070,Cutting of Annular Plate,8511,2968,0,10,0,225.24,225.24,10,0,0,0,,,,2015-01-20 15:00,2015-01-21 15:00,,2014-02-09 07:00,2014-02-09 17:00,2014-02-09 07:00,2014-02-09 17:00,2014-02-09 07:00,2014-02-09 17:00,2015-01-20 15:00,2015-01-21 15:00,,PT_Normal,,,,,khb3DaSaqk2KkDOwMcIqmQ,mu4+KA3XGkGxgILj8ZdI8g,,,N,0,0,,,2014-04-13 07:21,2014-04-14 17:03,admin,admin,
2487,142584,6971,39938,7842,0,N,N,N,CP_Phys,TT_Task,DT_FixedDrtn,TK_NotStart,CZA-TK-3490-2080,Cutting of Bottom Plates,8511,3447.5,0,10,0,349.836,349.836,10,0,0,0,,,,2015-03-18 14:30,2015-03-19 14:30,,2014-02-10 07:00,2014-02-10 17:00,2014-02-10 07:00,2014-02-10 17:00,2014-02-10 07:00,2014-02-10 17:00,2015-03-18 14:30,2015-03-19 14:30,,PT_Normal,,,,,+YMcJw6eTka+/p4qJ/yRWQ,2ei2jBfRl06yyZddkyfjcg,,,N,0,0,,,2014-04-13 07:21,2014-04-14 17:03,admin,admin,
2488,142585,6971,39938,7842,0,N,N,N,CP_Phys,TT_Task,DT_FixedDrtn,TK_NotStart,CZA-TK-3490-2090,"Cutting, Bevelling & Rolling of Shell No.1",8511,3447.5,0,10,0,170.4996,170.4996,10,0,0,0,,,,2015-03-19 14:30,2015-03-21 14:30,,2014-02-11 07:00,2014-02-11 17:00,2014-02-11 07:00,2014-02-11 17:00,2014-02-11 07:00,2014-02-11 17:00,2015-03-19 14:30,2015-03-21 14:30,,PT_Normal,,,,,f/jY5wGv70iWYzByiT5xkQ,suKjLrBEcU279lDbzhEEmQ,,,N,0,0,,,2014-04-13 07:21,2014-04-14 17:03,admin,admin,
2489,142586,6971,39938,7842,0,N,N,N,CP_Phys,TT_Task,DT_FixedDrtn,TK_NotStart,CZA-TK-3490-2100,"Cutting, Bevelling & Rolling of Shell No.2",8511,3447.5,0,10,0,274.98,274.98,10,0,0,0,,,,2015-03-21 14:30,2015-03-22 14:30,,2014-02-12 07:00,2014-02-12 17:00,2014-02-12 07:00,2014-02-12 17:00,2014-02-12 07:00,2014-02-12 17:00,2015-03-21 14:30,2015-03-22 14:30,,PT_Normal,,,,,65WZBdInV0SRg/NODvWgTA,lGE/1eyt4kSbZc/mHslztQ,,,N,0,0,,,2014-04-13 07:21,2014-04-14 17:03,admin,admin,
2490,142587,6971,39938,7842,0,N,N,N,CP_Phys,TT_Task,DT_FixedDrtn,TK_NotStart,CZA-TK-3490-2110,"Cutting, Fit-up and Welding of Shell Nozzles,Manholes and Other Appurtanances",8511,3447.5,0,50,0,0,0,50,0,0,0,,,,2015-03-22 14:30,2015-03-28 14:30,,2014-02-13 07:00,2014-02-18 17:00,2014-02-13 07:00,2014-02-18 17:00,2014-02-13 07:00,2014-02-18 17:00,2015-03-22 14:30,2015-03-28 14:30,,PT_Normal,,,,,S0ttheWJs0et83UhFZrZCg,R4CKmrmyM0CLwxjME0gBqg,,,N,0,0,,,2014-04-13 07:21,2014-04-14 17:03,admin,admin,
2491,142588,6971,39938,7842,0,N,N,N,CP_Phys,TT_Task,DT_FixedDrtn,TK_NotStart,CZA-TK-3490-2120,"Cutting, Bevelling & Rolling of Shell No.3",8511,3447.5,0,10,0,240.594,240.594,10,0,0,0,,,,2015-03-28 14:30,2015-03-29 14:30,,2014-02-19 07:00,2014-02-19 17:00,2014-02-19 07:00,2014-02-19 17:00,2014-02-19 07:00,2014-02-19 17:00,2015-03-28 14:30,2015-03-29 14:30,,PT_Normal,,,,,GelQqUXL3UiSw2z/rg6qPQ,p66z8AL6M0WYVMfLPpxoTg,,,N,0,0,,,2014-04-13 07:21,2014-04-14 17:03,admin,admin,
2492,142589,6971,39938,7842,0,N,N,N,CP_Phys,TT_Task,DT_FixedDrtn,TK_NotStart,CZA-TK-3490-2130,"Cutting, Bevelling & Rolling of Shell No.4",8511,3447.5,0,10,0,206.214,206.214,10,0,0,0,,,,2015-03-29 14:30,2015-03-30 14:30,,2014-02-20 07:00,2014-02-20 17:00,2014-02-20 07:00,2014-02-20 17:00,2014-02-20 07:00,2014-02-20 17:00,2015-03-29 14:30,2015-03-30 14:30,,PT_Normal,,,,,ijr7b+16S06z7FQ0lNsJGw,wr+SxD37TEWSNhjH5KJFAA,,,N,0,0,,,2014-04-13 07:21,2014-04-14 17:03,admin,admin,
2493,142590,6971,39938,7842,0,N,N,N,CP_Phys,TT_Task,DT_FixedDrtn,TK_NotStart,CZA-TK-3490-2140,"Cutting, Bevelling & Rolling of Shell No.5",8511,3447.5,0,10,0,68.739,68.739,10,0,0,0,,,,2015-03-30 14:30,2015-03-31 14:30,,2014-02-22 07:00,2014-02-22 17:00,2014-02-22 07:00,2014-02-22 17:00,2014-02-22 07:00,2014-02-22 17:00,2015-03-30 14:30,2015-03-31 14:30,,PT_Normal,,,,,BmqCvCXZx060uAewLBzyog,WU6xX/n9hUu+YOUeaE5xqQ,,,N,0,0,,,2014-04-13 07:21,2014-04-14 17:03,admin,admin,
2494,142591,6971,39938,7842,0,N,N,N,CP_Phys,TT_Task,DT_FixedDrtn,TK_NotStart,CZA-TK-3490-2150,"Cutting, Bevelling & Rolling of Shell No.6",8511,3447.5,0,10,0,211.083,211.083,10,0,0,0,,,,2015-03-31 14:30,2015-04-01 14:30,,2014-02-23 07:00,2014-02-23 17:00,2014-02-23 07:00,2014-02-23 17:00,2014-02-23 07:00,2014-02-23 17:00,2015-03-31 14:30,2015-04-01 14:30,,PT_Normal,,,,,KoQJNR7i9kijQNj0wn5PuA,x98UNk6hsUCUnSQmuR2++A,,,N,0,0,,,2014-04-13 07:21,2014-04-14 17:03,admin,admin,
2495,142592,6971,39938,7842,0,N,N,N,CP_Phys,TT_Task,DT_FixedDrtn,TK_NotStart,CZA-TK-3490-2160,"Cutting, Bevelling & Rolling of Curb Angle",8511,3447.5,0,20,0,0,0,20,0,0,0,,,,2015-04-01 14:30,2015-04-04 14:30,,2014-02-24 07:00,2014-02-25 17:00,2014-02-24 07:00,2014-02-25 17:00,2014-02-24 07:00,2014-02-25 17:00,2015-04-01 14:30,2015-04-04 14:30,,PT_Normal,,,,,CNyYvLYHgkGGPFu5XLtLNg,GkF4UXUvok6el65JDlZ89w,,,N,0,0,,,2014-04-13 07:21,2014-04-14 17:03,admin,admin,
2496,142593,6971,39938,7842,0,N,N,N,CP_Phys,TT_Task,DT_FixedDrtn,TK_NotStart,CZA-TK-3490-2170,"Cutting, Bevelling & Rolling of Roof Structure",8511,3447.5,0,50,0,0,0,50,0,0,0,,,,2015-04-04 10:30,2015-04-09 10:30,,2014-02-25 13:00,2014-03-03 13:00,2014-02-25 13:00,2014-03-03 13:00,2014-02-25 13:00,2014-03-03 13:00,2015-04-04 10:30,2015-04-09 10:30,,PT_Normal,,,,,cM+ihH5o2E6/k1HVdk0uxg,Ras7DfVtgUecBFLyiqkT4A,,,N,0,0,,,2014-04-13 07:21,2014-04-14 17:03,admin,admin,
2497,142594,6971,39938,7842,0,N,N,N,CP_Phys,TT_Task,DT_FixedDrtn,TK_NotStart,CZA-TK-3490-2180,Cutting of Roof Plates,8511,3447.5,0,12.5,0,422.46,422.46,12.5,0,0,0,,,,2015-04-07 12:30,2015-04-08 15:00,,2014-03-01 15:00,2014-03-03 07:30,2014-03-01 15:00,2014-03-03 07:30,2014-03-01 15:00,2014-03-03 07:30,2015-04-07 12:30,2015-04-08 15:00,,PT_Normal,,,,,Mlw0WmM17k+MSaIKFGyOdA,ZcgZBjvqWU+/iNyIPEQxpA,,,N,0,0,,,2014-04-13 07:21,2014-04-14 17:03,admin,admin,
2498,142595,6971,39938,7842,0,N,N,N,CP_Phys,TT_Task,DT_FixedDrtn,TK_NotStart,CZA-TK-3490-2190,"Cutting,Fit-up and Welding of Roof Nozzles, Manholes & Other Appurtanances",8511,3447.5,0,50,0,0,0,50,0,0,0,,,,2015-04-08 15:00,2015-04-14 15:00,,2014-03-03 07:30,2014-03-09 07:30,2014-03-03 07:30,2014-03-09 07:30,2014-03-03 07:30,2014-03-09 07:30,2015-04-08 15:00,2015-04-14 15:00,,PT_Normal,,,,,wFDz6r8ta0Wwz7iBRT52iQ,DLZeC8outEaeyfyOCMpMDg,,,N,0,0,,,2014-04-13 07:21,2014-04-14 17:03,admin,admin,
2499,142596,6971,39938,7842,0,N,N,N,CP_Phys,TT_Task,DT_FixedDrtn,TK_NotStart,CZA-TK-3490-2200,"Cutting, Fit-up & Welding  of Roof Platform, Gratings and Handrails",8511,3447.5,0,100,0,0,0,100,0,0,0,,,,2015-04-08 15:00,2015-04-20 15:00,,2014-03-03 07:30,2014-03-15 07:30,2014-03-03 07:30,2014-03-15 07:30,2014-03-03 07:30,2014-03-15 07:30,2015-04-08 15:00,2015-04-20 15:00,,PT_Normal,,,,,nq1XkGn+ekO0qO8fCyPnGw,c+TbSKyrj0SsL0XqcEUX/A,,,N,0,0,,,2014-04-13 07:21,2014-04-14 17:03,admin,admin,
2500,142597,6971,39938,7842,0,N,N,N,CP_Phys,TT_Task,DT_FixedDrtn,TK_NotStart,CZA-TK-3490-2210,"Cutting, Fit-up and Welding of Stairway Platfrom, Gratings and Handrails",8511,3447.5,1387.5,100,0,0,0,100,0,0,0,,,,2015-04-08 15:00,2015-04-20 15:00,,2014-03-03 07:30,2014-03-15 07:30,2014-03-03 07:30,2014-03-15 07:30,2014-03-03 07:30,2014-03-15 07:30,2015-04-08 15:00,2015-04-20 15:00,,PT_Normal,,,,,c1saLrE3pUulJs8bsa591Q,eqeiNDYYzkK8MA5E03nMrg,,,N,0,0,,,2014-04-13 07:21,2014-04-14 17:03,admin,admin,
2501,142598,6971,39981,7842,0,N,N,N,CP_Phys,TT_Task,DT_FixedDrtn,TK_NotStart,CZA-TK-3491-2500,"Filling, Holding Transfering/Draining of Water",8405,778,0,420,0,10000.964915,10000.964915,420,0,0,0,,,,2015-03-26 15:00,2015-05-14 15:00,,2014-12-27 07:00,2015-02-12 17:00,2014-12-27 07:00,2015-02-12 17:00,2014-12-27 07:00,2015-02-12 17:00,2015-03-26 15:00,2015-05-14 15:00,,PT_Normal,,,,,EmXiSSdo+UKghJ7EbfjOGg,B7OiOI8b50+o576loI/I/Q,,,N,0,0,,,2014-04-13 07:21,2014-04-14 16:04,admin,admin,
2502,142599,6971,40569,7842,0,N,N,N,CP_Phys,TT_Task,DT_FixedDrtn,TK_NotStart,CZA-TK-3491-1990,Erection and Fit-up,8405,778,0,20,0,260.858523,260.858523,20,160,0,160,,,,2014-08-28 15:00,2014-08-31 15:00,,2014-05-31 07:00,2014-06-01 17:00,2014-05-31 07:00,2014-06-01 17:00,2014-05-31 07:00,2014-06-01 17:00,2014-08-28 15:00,2014-08-31 15:00,,PT_Normal,,,,,V8oTQM6D5Ey6lPEYp/edCw,N+T4GU6e70S39r+Y87mvYQ,,,N,0,0,,,2014-04-13 07:21,2014-04-14 16:04,admin,admin,
2503,142600,6971,40569,7842,0,N,N,N,CP_Phys,TT_Task,DT_FixedDrtn,TK_NotStart,CZA-TK-3491-2000,Welding,8405,778,0,80,0,326.073154,326.073154,80,640,0,640,,,,2014-08-31 15:00,2014-09-09 15:00,,2014-06-02 07:00,2014-06-10 17:00,2014-06-02 07:00,2014-06-10 17:00,2014-06-02 07:00,2014-06-10 17:00,2014-08-31 15:00,2014-09-09 15:00,,PT_Normal,,,,,TrQ12cEtUUe/t61xa89cgg,QzmzTgxQDkiRVoIBUN4QsA,,,N,0,0,,,2014-04-13 07:21,2014-04-14 16:04,admin,admin,
2504,142601,6971,40569,7842,0,N,N,N,CP_Phys,TT_Task,DT_FixedDrtn,TK_NotStart,CZA-TK-3491-2010,Inspection,8405,778,0,100,0,65.214631,65.214631,100,0,0,0,,,,2014-08-28 15:00,2014-09-09 15:00,,2014-05-31 07:00,2014-06-10 17:00,2014-05-31 07:00,2014-06-10 17:00,2014-05-31 07:00,2014-06-10 17:00,2014-08-28 15:00,2014-09-09 15:00,,PT_Normal,,,,,2GpTYNjw90uXYolWxUIpzA,29nmQ1Ouw02Z+zOnwp8VYw,,,N,0,0,,,2014-04-13 07:21,2014-04-14 16:04,admin,admin,
2505,142602,6971,40570,7842,0,N,N,N,CP_Phys,TT_Task,DT_FixedDrtn,TK_NotStart,CZA-TK-3491-2020,"Cutting, Installation and Fit-up",8405,778,0,30,0,0,0,30,240,0,240,,,,2014-09-09 15:00,2014-09-13 15:00,,2014-06-11 07:00,2014-06-14 17:00,2014-06-11 07:00,2014-06-14 17:00,2014-06-11 07:00,2014-06-14 17:00,2014-09-09 15:00,2014-09-13 15:00,,PT_Normal,,,,,fwXnEBaGoki2YmTOA0jbmw,66chmx/tvUOz+2yt8bkDbg,,,N,0,0,,,2014-04-13 07:21,2014-04-14 16:04,admin,admin,
2506,142603,6971,40570,7842,0,N,N,N,CP_Phys,TT_Task,DT_FixedDrtn,TK_NotStart,CZA-TK-3491-2030,Welding,8405,778,0,60,0,0,0,60,480,0,480,,,,2014-09-13 15:00,2014-09-20 15:00,,2014-06-15 07:00,2014-06-21 17:00,2014-06-15 07:00,2014-06-21 17:00,2014-06-15 07:00,2014-06-21 17:00,2014-09-13 15:00,2014-09-20 15:00,,PT_Normal,,,,,x/IDz9nOQUWE2mPcdlI0aQ,EZGVM9Pht0ajk9W8YLZlng,,,N,0,0,,,2014-04-13 07:21,2014-04-14 16:04,admin,admin,
2507,142604,6971,40570,7842,0,N,N,N,CP_Phys,TT_Task,DT_FixedDrtn,TK_NotStart,CZA-TK-3491-2040,Inspection,8405,778,0,90,0,0,0,90,0,0,0,,,,2014-09-09 15:00,2014-09-20 15:00,,2014-06-11 07:00,2014-06-21 17:00,2014-06-11 07:00,2014-06-21 17:00,2014-06-11 07:00,2014-06-21 17:00,2014-09-09 15:00,2014-09-20 15:00,,PT_Normal,,,,,xiUfTySA8Uq4odg5tU7XbQ,k2aF4IAF9EmsFT7863683w,,,N,0,0,,,2014-04-13 07:21,2014-04-14 16:04,admin,admin,
2508,142605,6971,40571,7842,0,N,N,N,CP_Phys,TT_Task,DT_FixedDrtn,TK_NotStart,CZA-TK-3491-2050,Erection and Fit-up,8405,778,0,40,0,0,0,40,320,0,320,,,,2014-09-20 15:00,2014-09-24 15:00,,2014-06-22 07:00,2014-06-25 17:00,2014-06-22 07:00,2014-06-25 17:00,2014-06-22 07:00,2014-06-25 17:00,2014-09-20 15:00,2014-09-24 15:00,,PT_Normal,,,,,oWhOpKpaFUWIhSQkIbMBmg,QXYj7LfvlE6N9KH8cgxXaw,,,N,0,0,,,2014-04-13 07:21,2014-04-14 16:04,admin,admin,
2509,142606,6971,40571,7842,0,N,N,N,CP_Phys,TT_Task,DT_FixedDrtn,TK_NotStart,CZA-TK-3491-2060,Welding,8405,778,0,60,0,0,0,60,480,0,480,,,,2014-09-24 15:00,2014-10-01 15:00,,2014-06-26 07:00,2014-07-02 17:00,2014-06-26 07:00,2014-07-02 17:00,2014-06-26 07:00,2014-07-02 17:00,2014-09-24 15:00,2014-10-01 15:00,,PT_Normal,,,,,rUsgSERI0Ei31ooevduW1Q,jzt0x6lJe0mbYS+3N+BiUw,,,N,0,0,,,2014-04-13 07:21,2014-04-14 16:04,admin,admin,
2510,142607,6971,40571,7842,0,N,N,N,CP_Phys,TT_Task,DT_FixedDrtn,TK_NotStart,CZA-TK-3491-2070,Inspection,8405,778,0,100,0,0,0,100,0,0,0,,,,2014-09-20 15:00,2014-10-01 15:00,,2014-06-22 07:00,2014-07-02 17:00,2014-06-22 07:00,2014-07-02 17:00,2014-06-22 07:00,2014-07-02 17:00,2014-09-20 15:00,2014-10-01 15:00,,PT_Normal,,,,,AmXrnqKYIkS/dRwdfg8vaw,EdiCWkdbAUe1EuQhSBW6uw,,,N,0,0,,,2014-04-13 07:21,2014-04-14 16:04,admin,admin,
2511,142608,6971,40572,7842,0,N,N,N,CP_Phys,TT_Task,DT_FixedDrtn,TK_NotStart,CZA-TK-3491-2080,Erection and Fit-up,8405,778,0,30,0,1053.761551,1053.761551,30,240,0,240,,,,2014-10-01 15:00,2014-10-05 15:00,,2014-07-03 07:00,2014-07-06 17:00,2014-07-03 07:00,2014-07-06 17:00,2014-07-03 07:00,2014-07-06 17:00,2014-10-01 15:00,2014-10-05 15:00,,PT_Normal,,,,,g5mkBKEMIku4SJsEtbg4Aw,GsQqOaD+sU+3jTAkJHY3yA,,,N,0,0,,,2014-04-13 07:21,2014-04-14 16:04,admin,admin,
2512,142609,6971,40572,7842,0,N,N,N,CP_Phys,TT_Task,DT_FixedDrtn,TK_NotStart,CZA-TK-3491-2090,Welding,8405,778,0,50,0,1317.201939,1317.201939,50,400,0,400,,,,2014-10-05 15:00,2014-10-11 15:00,,2014-07-07 07:00,2014-07-12 17:00,2014-07-07 07:00,2014-07-12 17:00,2014-07-07 07:00,2014-07-12 17:00,2014-10-05 15:00,2014-10-11 15:00,,PT_Normal,,,,,Owm05uYay0iKoiWtqI/Tqg,oh6dnx5aMEScOGQiTrHOwg,,,N,0,0,,,2014-04-13 07:21,2014-04-14 16:04,admin,admin,
2513,142610,6971,40572,7842,0,N,N,N,CP_Phys,TT_Task,DT_FixedDrtn,TK_NotStart,CZA-TK-3491-2100,Inspection,8405,778,0,80,0,263.440388,263.440388,80,0,0,0,,,,2014-10-01 15:00,2014-10-11 15:00,,2014-07-03 07:00,2014-07-12 17:00,2014-07-03 07:00,2014-07-12 17:00,2014-07-03 07:00,2014-07-12 17:00,2014-10-01 15:00,2014-10-11 15:00,,PT_Normal,,,,,uRWCiYD6lku8SS4/uyrypA,woXvYYdW60OQ7Nt3b1NPqw,,,N,0,0,,,2014-04-13 07:21,2014-04-14 16:04,admin,admin,
2514,142611,6971,40364,7842,0,N,N,N,CP_Phys,TT_Task,DT_FixedDrtn,TK_NotStart,CZA-TK-3491-2110,Laying and Fit-up,8405,778,0,40,0,864.604758,864.604758,40,320,0,320,,,,2014-10-11 15:00,2014-10-15 15:00,,2014-07-13 07:00,2014-07-16 17:00,2014-07-13 07:00,2014-07-16 17:00,2014-07-13 07:00,2014-07-16 17:00,2014-10-11 15:00,2014-10-15 15:00,,PT_Normal,,,,,zqC/GGJMUUGCgsWuvOVctw,pgKLvw+lN0eVJH6BhH2gmQ,,,N,0,0,,,2014-04-13 07:21,2014-04-14 16:04,admin,admin,
2515,142612,6971,40364,7842,0,N,N,N,CP_Phys,TT_Task,DT_FixedDrtn,TK_NotStart,CZA-TK-3491-2120,Welding,8405,778,0,80,0,1080.755948,1080.755948,80,640,0,640,,,,2014-10-15 15:00,2014-10-25 15:00,,2014-07-17 07:00,2014-07-26 17:00,2014-07-17 07:00,2014-07-26 17:00,2014-07-17 07:00,2014-07-26 17:00,2014-10-15 15:00,2014-10-25 15:00,,PT_Normal,,,,,V1RqsDIcnUq5N5wEXObsCQ,afO1cP76JkK9nk/OPLwFXw,,,N,0,0,,,2014-04-13 07:21,2014-04-14 16:04,admin,admin,
2516,142613,6971,40364,7842,0,N,N,N,CP_Phys,TT_Task,DT_FixedDrtn,TK_NotStart,CZA-TK-3491-2130,Inspection,8405,778,0,120,0,216.15119,216.15119,120,0,0,0,,,,2014-10-11 15:00,2014-10-25 15:00,,2014-07-13 07:00,2014-07-26 17:00,2014-07-13 07:00,2014-07-26 17:00,2014-07-13 07:00,2014-07-26 17:00,2014-10-11 15:00,2014-10-25 15:00,,PT_Normal,,,,,AvgZFaRIn0Ok4/Gk/5DBkw,FFh8JojIZkGgV6EvDFZeaw,,,N,0,0,,,2014-04-13 07:21,2014-04-14 16:04,admin,admin,
2517,142614,6971,40365,7842,0,N,N,N,CP_Phys,TT_Task,DT_FixedDrtn,TK_NotStart,CZA-TK-3491-2140,Laying and Fit-up,8405,778,0,20,0,0,0,20,160,0,160,,,,2014-10-25 15:00,2014-10-27 15:00,,2014-07-27 07:00,2014-07-28 17:00,2014-07-27 07:00,2014-07-28 17:00,2014-07-27 07:00,2014-07-28 17:00,2014-10-25 15:00,2014-10-27 15:00,,PT_Normal,,,,,INR5cDH+lUOH7/AXoJ8BzQ,eMVqDNV8uUG2rCs2h5Kmlw,,,N,0,0,,,2014-04-13 07:21,2014-04-14 16:04,admin,admin,
2518,142615,6971,40365,7842,0,N,N,N,CP_Phys,TT_Task,DT_FixedDrtn,TK_NotStart,CZA-TK-3491-2150,Welding,8405,778,0,80,0,0,0,80,640,0,640,,,,2014-10-27 15:00,2014-11-05 15:00,,2014-07-29 07:00,2014-08-06 17:00,2014-07-29 07:00,2014-08-06 17:00,2014-07-29 07:00,2014-08-06 17:00,2014-10-27 15:00,2014-11-05 15:00,,PT_Normal,,,,,tmiN7weQoEu/sYZg/onVJg,jc1Peshl9UKwWZXKw6VKuw,,,N,0,0,,,2014-04-13 07:21,2014-04-14 16:04,admin,admin,
2519,142616,6971,40365,7842,0,N,N,N,CP_Phys,TT_Task,DT_FixedDrtn,TK_NotStart,CZA-TK-3491-2160,Inspection,8405,778,0,100,0,0,0,100,0,0,0,,,,2014-10-25 15:00,2014-11-05 15:00,,2014-07-27 07:00,2014-08-06 17:00,2014-07-27 07:00,2014-08-06 17:00,2014-07-27 07:00,2014-08-06 17:00,2014-10-25 15:00,2014-11-05 15:00,,PT_Normal,,,,,vJA9C6FA7UK4yTfvpbmxsA,qC+TF1W44EmkktNeHqHp3g,,,N,0,0,,,2014-04-13 07:21,2014-04-14 16:04,admin,admin,
2520,142617,6971,40366,7842,0,N,N,N,CP_Phys,TT_Task,DT_FixedDrtn,TK_NotStart,CZA-TK-3491-2170,"Cutting,lnstallation and Fit-up",8405,778,0,40,0,0,0,40,320,0,320,,,,2014-11-05 15:00,2014-11-10 15:00,,2014-08-07 07:00,2014-08-11 17:00,2014-08-07 07:00,2014-08-11 17:00,2014-08-07 07:00,2014-08-11 17:00,2014-11-05 15:00,2014-11-10 15:00,,PT_Normal,,,,,u+rAGHsSp0isZC/CoCpJYQ,NkyUWRyapESENf/0pWF8rA,,,N,0,0,,,2014-04-13 07:21,2014-04-14 16:04,admin,admin,
2521,142618,6971,40366,7842,0,N,N,N,CP_Phys,TT_Task,DT_FixedDrtn,TK_NotStart,CZA-TK-3491-2180,Welding,8405,778,0,60,0,0,0,60,480,0,480,,,,2014-11-10 15:00,2014-11-17 15:00,,2014-08-12 07:00,2014-08-18 17:00,2014-08-12 07:00,2014-08-18 17:00,2014-08-12 07:00,2014-08-18 17:00,2014-11-10 15:00,2014-11-17 15:00,,PT_Normal,,,,,XaUQKk2V+kmidjcLhI0MYg,2BMSbTFwqEihDPlYhH6CYw,,,N,0,0,,,2014-04-13 07:21,2014-04-14 16:04,admin,admin,
2522,142619,6971,40366,7842,0,N,N,N,CP_Phys,TT_Task,DT_FixedDrtn,TK_NotStart,CZA-TK-3491-2190,Inspection,8405,778,0,100,0,0,0,100,0,0,0,,,,2014-11-05 15:00,2014-11-17 15:00,,2014-08-07 07:00,2014-08-18 17:00,2014-08-07 07:00,2014-08-18 17:00,2014-08-07 07:00,2014-08-18 17:00,2014-11-05 15:00,2014-11-17 15:00,,PT_Normal,,,,,X723uXlaXkG7YYP4FC/xXg,SyAt9+7MpkK6egAJhAaCyQ,,,N,0,0,,,2014-04-13 07:21,2014-04-14 16:04,admin,admin,
2523,142620,6971,40367,7842,0,N,N,N,CP_Phys,TT_Task,DT_FixedDrtn,TK_NotStart,CZA-TK-3491-2350,"Jacking, Erection and Fit-up",8405,778,0,20,0,684.961556,684.961556,20,160,0,160,,,,2015-01-19 15:00,2015-01-21 15:00,,2014-10-21 07:00,2014-10-22 17:00,2014-10-21 07:00,2014-10-22 17:00,2014-10-21 07:00,2014-10-22 17:00,2015-01-19 15:00,2015-01-21 15:00,,PT_Normal,,,,,/i+dx5k8D0KoEier8tOD/A,b5e4XQmMSk+uVZXg4z+urQ,,,N,0,0,,,2014-04-13 07:21,2014-04-14 16:04,admin,admin,
2524,142621,6971,40367,7842,0,N,N,N,CP_Phys,TT_Task,DT_FixedDrtn,TK_NotStart,CZA-TK-3491-2360,Welding,8405,778,0,80,0,856.201945,856.201945,80,640,0,640,,,,2015-01-21 15:00,2015-01-31 15:00,,2014-10-23 07:00,2014-11-01 17:00,2014-10-23 07:00,2014-11-01 17:00,2014-10-23 07:00,2014-11-01 17:00,2015-01-21 15:00,2015-01-31 15:00,,PT_Normal,,,,,xCxqW/rId0u/nphBfLGg5w,HO63DHbw7UaftCLiI1wC7w,,,N,0,0,,,2014-04-13 07:21,2014-04-14 16:04,admin,admin,
2525,142622,6971,40367,7842,0,N,N,N,CP_Phys,TT_Task,DT_FixedDrtn,TK_NotStart,CZA-TK-3491-2370,Inspection,8405,778,0,100,0,171.240389,171.240389,100,0,0,0,,,,2015-01-19 15:00,2015-01-31 15:00,,2014-10-21 07:00,2014-11-01 17:00,2014-10-21 07:00,2014-11-01 17:00,2014-10-21 07:00,2014-11-01 17:00,2015-01-19 15:00,2015-01-31 15:00,,PT_Normal,,,,,LoVBsMs7XESZqENpCkCEBg,umnIptkOI0yoUrGUQ6edJA,,,N,0,0,,,2014-04-13 07:21,2014-04-14 16:04,admin,admin,
2526,142623,6971,40368,7842,0,N,N,N,CP_Phys,TT_Task,DT_FixedDrtn,TK_NotStart,CZA-TK-3491-2380,"Jacking, Erection and Fit-up",8405,778,0,20,0,750.236271,750.236271,20,160,0,160,,,,2015-01-31 15:00,2015-02-02 15:00,,2014-11-02 07:00,2014-11-03 17:00,2014-11-02 07:00,2014-11-03 17:00,2014-11-02 07:00,2014-11-03 17:00,2015-01-31 15:00,2015-02-02 15:00,,PT_Normal,,,,,mrQp18fjqEmqrkEtxC8pDg,8drcvPKVIUy16XezlpVQcw,,,N,0,0,,,2014-04-13 07:21,2014-04-14 16:04,admin,admin,
2527,142624,6971,40368,7842,0,N,N,N,CP_Phys,TT_Task,DT_FixedDrtn,TK_NotStart,CZA-TK-3491-2390,Welding,8405,778,0,80,0,937.795339,937.795339,80,640,0,640,,,,2015-02-02 15:00,2015-02-11 15:00,,2014-11-04 07:00,2014-11-12 17:00,2014-11-04 07:00,2014-11-12 17:00,2014-11-04 07:00,2014-11-12 17:00,2015-02-02 15:00,2015-02-11 15:00,,PT_Normal,,,,,PCaENcJCo0ibBTiY7miOVg,w/rK6qyZk0287fjbBMFmhg,,,N,0,0,,,2014-04-13 07:21,2014-04-14 16:04,admin,admin,
2528,142625,6971,40368,7842,0,N,N,N,CP_Phys,TT_Task,DT_FixedDrtn,TK_NotStart,CZA-TK-3491-2400,Inspection,8405,778,0,100,0,187.559068,187.559068,100,0,0,0,,,,2015-01-31 15:00,2015-02-11 15:00,,2014-11-02 07:00,2014-11-12 17:00,2014-11-02 07:00,2014-11-12 17:00,2014-11-02 07:00,2014-11-12 17:00,2015-01-31 15:00,2015-02-11 15:00,,PT_Normal,,,,,P3prLuPz70Ol8lcgdZt5hg,+12geqy90EiFQ99Bug+nog,,,N,0,0,,,2014-04-13 07:21,2014-04-14 16:04,admin,admin,
2529,142626,6971,40369,7842,0,N,N,N,CP_Phys,TT_Task,DT_FixedDrtn,TK_NotStart,CZA-TK-3491-2410,"Jacking, Erection and Fit-up",8405,778,0,20,0,848.1513,848.1513,20,160,0,160,,,,2015-02-11 15:00,2015-02-14 15:00,,2014-11-13 07:00,2014-11-15 17:00,2014-11-13 07:00,2014-11-15 17:00,2014-11-13 07:00,2014-11-15 17:00,2015-02-11 15:00,2015-02-14 15:00,,PT_Normal,,,,,EV5rj9A8fUyvhyVgnpeiFA,qmHP5pXTYEmcFOJkt5WODA,,,N,0,0,,,2014-04-13 07:21,2014-04-14 16:04,admin,admin,
2530,142627,6971,40369,7842,0,N,N,N,CP_Phys,TT_Task,DT_FixedDrtn,TK_NotStart,CZA-TK-3491-2420,Welding,8405,778,0,80,0,1060.189125,1060.189125,80,640,0,640,,,,2015-02-14 15:00,2015-02-23 15:00,,2014-11-16 07:00,2014-11-24 17:00,2014-11-16 07:00,2014-11-24 17:00,2014-11-16 07:00,2014-11-24 17:00,2015-02-14 15:00,2015-02-23 15:00,,PT_Normal,,,,,17m5rGsmNUWiEx3IRMibCA,BK+hVaMzJ0u9hVMsPFiwxA,,,N,0,0,,,2014-04-13 07:21,2014-04-14 16:04,admin,admin,
2531,142628,6971,40369,7842,0,N,N,N,CP_Phys,TT_Task,DT_FixedDrtn,TK_NotStart,CZA-TK-3491-2430,Inspection,8405,778,0,100,0,212.037825,212.037825,100,0,0,0,,,,2015-02-11 15:00,2015-02-23 15:00,,2014-11-13 07:00,2014-11-24 17:00,2014-11-13 07:00,2014-11-24 17:00,2014-11-13 07:00,2014-11-24 17:00,2015-02-11 15:00,2015-02-23 15:00,,PT_Normal,,,,,mAbI1RQqi0O1GmGVLMBvHA,ezx9LqofDUeMkn2BZNj4oQ,,,N,0,0,,,2014-04-13 07:21,2014-04-14 16:04,admin,admin,
2532,142629,6971,40161,7842,0,N,N,N,CP_Phys,TT_Task,DT_FixedDrtn,TK_NotStart,CZA-TK-3491-2440,"Lay-out, Cutting, and Fit-up",8405,778,0,40,0,0,0,40,320,0,320,,,,2015-02-23 15:00,2015-02-28 15:00,,2014-11-25 07:00,2014-11-29 17:00,2014-11-25 07:00,2014-11-29 17:00,2014-11-25 07:00,2014-11-29 17:00,2015-02-23 15:00,2015-02-28 15:00,,PT_Normal,,,,,o0iebWkHjk+ACOszTlLJ8w,PJuJDuuRd0KzmdFZn0EfVQ,,,N,0,0,,,2014-04-13 07:21,2014-04-14 16:04,admin,admin,
2533,142630,6971,40161,7842,0,N,N,N,CP_Phys,TT_Task,DT_FixedDrtn,TK_NotStart,CZA-TK-3491-2450,Welding,8405,778,0,80,0,0,0,80,640,0,640,,,,2015-02-28 15:00,2015-03-09 15:00,,2014-11-30 07:00,2014-12-08 17:00,2014-11-30 07:00,2014-12-08 17:00,2014-11-30 07:00,2014-12-08 17:00,2015-02-28 15:00,2015-03-09 15:00,,PT_Normal,,,,,BqUvci0mj0uZTYLNIo1VsQ,siN3ICwaoUCTbhwV1Brjgw,,,N,0,0,,,2014-04-13 07:21,2014-04-14 16:04,admin,admin,
2534,142631,6971,40161,7842,0,N,N,N,CP_Phys,TT_Task,DT_FixedDrtn,TK_NotStart,CZA-TK-3491-2460,Inspection,8405,778,0,120,0,0,0,120,0,0,0,,,,2015-02-23 15:00,2015-03-09 15:00,,2014-11-25 07:00,2014-12-08 17:00,2014-11-25 07:00,2014-12-08 17:00,2014-11-25 07:00,2014-12-08 17:00,2015-02-23 15:00,2015-03-09 15:00,,PT_Normal,,,,,3xQIiSmGFUizCaP+UI1nAA,ZU4OtQpFokmEqxtm0s8oZA,,,N,0,0,,,2014-04-13 07:21,2014-04-14 16:04,admin,admin,
2535,142632,6971,40203,7842,0,N,N,N,CP_Phys,TT_Task,DT_FixedDrtn,TK_NotStart,CZA-TK-3491-2470,Erection and Fit-up,8405,778,0,30,0,848.1513,848.1513,30,240,0,240,,,,2015-03-09 15:00,2015-03-12 15:00,,2014-12-09 07:00,2014-12-11 17:00,2014-12-09 07:00,2014-12-11 17:00,2014-12-09 07:00,2014-12-11 17:00,2015-03-09 15:00,2015-03-12 15:00,,PT_Normal,,,,,82m4Z225j0W07h4JMO0McA,jLRDOUWEDkOX/n4Au1yD0w,,,N,0,0,,,2014-04-13 07:21,2014-04-14 16:04,admin,admin,
2536,142633,6971,40203,7842,0,N,N,N,CP_Phys,TT_Task,DT_FixedDrtn,TK_NotStart,CZA-TK-3491-2480,Welding,8405,778,0,120,0,1060.189125,1060.189125,120,960,0,960,,,,2015-03-12 15:00,2015-03-26 15:00,,2014-12-13 07:00,2014-12-25 17:00,2014-12-13 07:00,2014-12-25 17:00,2014-12-13 07:00,2014-12-25 17:00,2015-03-12 15:00,2015-03-26 15:00,,PT_Normal,,,,,kLpHLirGpUapO+ABZr38Gg,Ir/egi4cGk+gdZx7hWptdw,,,N,0,0,,,2014-04-13 07:21,2014-04-14 16:04,admin,admin,
2537,142634,6971,40203,7842,0,N,N,N,CP_Phys,TT_Task,DT_FixedDrtn,TK_NotStart,CZA-TK-3491-2490,Inspection,8405,778,0,150,0,212.037825,212.037825,150,0,0,0,,,,2015-03-09 15:00,2015-03-26 15:00,,2014-12-09 07:00,2014-12-25 17:00,2014-12-09 07:00,2014-12-25 17:00,2014-12-09 07:00,2014-12-25 17:00,2015-03-09 15:00,2015-03-26 15:00,,PT_Normal,,,,,fPyLL9hEjUO1VdIdh/6AUA,bs+j6z4oFEqYpXYFqrZGjg,,,N,0,0,,,2014-04-13 07:21,2014-04-14 16:04,admin,admin,
2538,142635,6971,40182,7842,0,N,N,N,CP_Phys,TT_Task,DT_FixedDrtn,TK_NotStart,CZA-TK-3491-1900,Laying and Fit-up,8405,778,0,20,0,235.181719,235.181719,20,160,0,160,,,,2014-07-19 15:00,2014-07-21 15:00,,2014-04-20 07:00,2014-04-21 17:00,2014-04-20 07:00,2014-04-21 17:00,2014-04-20 07:00,2014-04-21 17:00,2014-07-19 15:00,2014-07-21 15:00,,PT_Normal,,,,,8EjJPK8zRkaWmUiq/n1s+w,APBrnZlakUiOOFnlo/xcsg,,,N,0,0,,,2014-04-13 07:21,2014-04-14 16:04,admin,admin,
2539,142636,6971,40182,7842,0,N,N,N,CP_Phys,TT_Task,DT_FixedDrtn,TK_NotStart,CZA-TK-3491-1910,Welding,8405,778,0,40,0,293.977149,293.977149,40,320,0,320,,,,2014-07-21 15:00,2014-07-26 15:00,,2014-04-22 07:00,2014-04-26 17:00,2014-04-22 07:00,2014-04-26 17:00,2014-04-22 07:00,2014-04-26 17:00,2014-07-21 15:00,2014-07-26 15:00,,PT_Normal,,,,,QX+FJuu1bUevcnctXXmTbQ,ebKLVVyBG0O0vt7xpKXLcg,,,N,0,0,,,2014-04-13 07:21,2014-04-14 16:04,admin,admin,
2540,142637,6971,40182,7842,0,N,N,N,CP_Phys,TT_Task,DT_FixedDrtn,TK_NotStart,CZA-TK-3491-1920,Inspection,8405,778,0,60,0,58.79543,58.79543,60,0,0,0,,,,2014-07-19 15:00,2014-07-26 15:00,,2014-04-20 07:00,2014-04-26 17:00,2014-04-20 07:00,2014-04-26 17:00,2014-04-20 07:00,2014-04-26 17:00,2014-07-19 15:00,2014-07-26 15:00,,PT_Normal,,,,,5Eh1NrdJr0eYweUXrtZfCg,opH9xsjrvEePgY0h1MO6xw,,,N,0,0,,,2014-04-13 07:21,2014-04-14 16:04,admin,admin,
2541,142638,6971,40273,7842,0,N,N,N,CP_Phys,TT_Task,DT_FixedDrtn,TK_NotStart,CZA-TK-3491-1950,Inspection,8405,778,0,190,0,234.912061,234.912061,190,0,0,0,,,,2014-07-26 15:00,2014-08-17 15:00,,2014-04-27 07:00,2014-05-18 17:00,2014-04-27 07:00,2014-05-18 17:00,2014-04-27 07:00,2014-05-18 17:00,2014-07-26 15:00,2014-08-17 15:00,,PT_Normal,,,,,U0yURptCoUORigADK1x8GQ,uiid7NVfWEOIdk4V3/PgLA,,,N,0,0,,,2014-04-13 07:21,2014-04-14 16:04,admin,admin,
2542,142639,6971,40273,7842,0,N,N,N,CP_Phys,TT_Task,DT_FixedDrtn,TK_NotStart,CZA-TK-3491-1930,Laying and Fit-up,8405,778,0,40,0,939.648243,939.648243,40,320,0,320,,,,2014-07-26 15:00,2014-07-30 15:00,,2014-04-27 07:00,2014-04-30 17:00,2014-04-27 07:00,2014-04-30 17:00,2014-04-27 07:00,2014-04-30 17:00,2014-07-26 15:00,2014-07-30 15:00,,PT_Normal,,,,,GMu8Y98KHkKDK1ZPWgXYLg,NaThPR/UckC8JBbX9bEpmw,,,N,0,0,,,2014-04-13 07:21,2014-04-14 16:04,admin,admin,
2543,142640,6971,40273,7842,0,N,N,N,CP_Phys,TT_Task,DT_FixedDrtn,TK_NotStart,CZA-TK-3491-1940,Welding,8405,778,0,150,0,1174.560304,1174.560304,150,1200,0,1200,,,,2014-07-30 15:00,2014-08-17 15:00,,2014-05-01 07:00,2014-05-18 17:00,2014-05-01 07:00,2014-05-18 17:00,2014-05-01 07:00,2014-05-18 17:00,2014-07-30 15:00,2014-08-17 15:00,,PT_Normal,,,,,iLTWvHGE0E67WvRVkAVMtQ,UC7GS00JpEybhKAMaJ+NYA,,,N,0,0,,,2014-04-13 07:21,2014-04-14 16:04,admin,admin,
2544,142641,6971,40383,7842,0,N,N,N,CP_Phys,TT_Task,DT_FixedDrtn,TK_NotStart,CZA-TK-3491-1960,Erection and Fit-up,8405,778,0,20,0,168.471146,168.471146,20,160,0,160,,,,2014-08-17 15:00,2014-08-19 15:00,,2014-05-19 07:00,2014-05-20 17:00,2014-05-19 07:00,2014-05-20 17:00,2014-05-19 07:00,2014-05-20 17:00,2014-08-17 15:00,2014-08-19 15:00,,PT_Normal,,,,,7Iz6+yoAikueaypMok43vg,s1VGbFbg4kumXpRpDZG4QQ,,,N,0,0,,,2014-04-13 07:21,2014-04-14 16:04,admin,admin,
2545,142642,6971,40383,7842,0,N,N,N,CP_Phys,TT_Task,DT_FixedDrtn,TK_NotStart,CZA-TK-3491-1970,Welding,8405,778,0,80,0,210.588933,210.588933,80,640,0,640,,,,2014-08-19 15:00,2014-08-28 15:00,,2014-05-21 07:00,2014-05-29 17:00,2014-05-21 07:00,2014-05-29 17:00,2014-05-21 07:00,2014-05-29 17:00,2014-08-19 15:00,2014-08-28 15:00,,PT_Normal,,,,,jbiCbJxULEqcm0ncUOQpHg,aD9E5LYB7Eym+uhG7b2AVw,,,N,0,0,,,2014-04-13 07:21,2014-04-14 16:04,admin,admin,
2546,142643,6971,40383,7842,0,N,N,N,CP_Phys,TT_Task,DT_FixedDrtn,TK_NotStart,CZA-TK-3491-1980,Inspection,8405,778,0,100,0,42.117787,42.117787,100,0,0,0,,,,2014-08-17 15:00,2014-08-28 15:00,,2014-05-19 07:00,2014-05-29 17:00,2014-05-19 07:00,2014-05-29 17:00,2014-05-19 07:00,2014-05-29 17:00,2014-08-17 15:00,2014-08-28 15:00,,PT_Normal,,,,,bRTS+nugpUKXrTR/2m8+6w,OP+48S/ua02edhUcqG1qiw,,,N,0,0,,,2014-04-13 07:21,2014-04-14 16:04,admin,admin,
2547,142644,6971,40275,7842,0,N,N,N,CP_Phys,TT_Task,DT_FixedDrtn,TK_NotStart,CZA-TK-3491-2200,Erection and Fit-up,8405,778,0,40,0,0,0,40,320,0,320,,,,2014-11-17 15:00,2014-11-22 15:00,,2014-08-19 07:00,2014-08-23 17:00,2014-08-19 07:00,2014-08-23 17:00,2014-08-19 07:00,2014-08-23 17:00,2014-11-17 15:00,2014-11-22 15:00,,PT_Normal,,,,,yy8IJErPs0KJNt7xxwNpbQ,6g23uOSGSE6Bg2rU4OgXpw,,,N,0,0,,,2014-04-13 07:21,2014-04-14 16:04,admin,admin,
2548,142645,6971,40275,7842,0,N,N,N,CP_Phys,TT_Task,DT_FixedDrtn,TK_NotStart,CZA-TK-3491-2210,Welding,8405,778,0,100,0,0,0,100,800,0,800,,,,2014-11-22 15:00,2014-12-03 15:00,,2014-08-24 07:00,2014-09-03 17:00,2014-08-24 07:00,2014-09-03 17:00,2014-08-24 07:00,2014-09-03 17:00,2014-11-22 15:00,2014-12-03 15:00,,PT_Normal,,,,,Ed/j/LnX80ej+a+FKhV7wQ,WpnWpwe8JEqjelrZRtYOSQ,,,N,0,0,,,2014-04-13 07:21,2014-04-14 16:04,admin,admin,
2549,142646,6971,40275,7842,0,N,N,N,CP_Phys,TT_Task,DT_FixedDrtn,TK_NotStart,CZA-TK-3491-2220,Inspection,8405,778,0,140,0,0,0,140,0,0,0,,,,2014-11-17 15:00,2014-12-03 15:00,,2014-08-19 07:00,2014-09-03 17:00,2014-08-19 07:00,2014-09-03 17:00,2014-08-19 07:00,2014-09-03 17:00,2014-11-17 15:00,2014-12-03 15:00,,PT_Normal,,,,,zASeiAV8vUqpBpct6L7RWQ,4JPXl9AhLkCDLFAWpvo48w,,,N,0,0,,,2014-04-13 07:21,2014-04-14 16:04,admin,admin,
2550,142647,6971,40276,7842,0,N,N,N,CP_Phys,TT_Task,DT_FixedDrtn,TK_NotStart,CZA-TK-3491-2230,"Jacking, Erection and Fit-up",8405,778,0,20,0,293.471913,293.471913,20,160,0,160,,,,2014-12-03 15:00,2014-12-06 15:00,,2014-09-04 07:00,2014-09-06 17:00,2014-09-04 07:00,2014-09-06 17:00,2014-09-04 07:00,2014-09-06 17:00,2014-12-03 15:00,2014-12-06 15:00,,PT_Normal,,,,,J4wL8eo0i0q8XaH6yl3+OA,plJdZAH49kanlSRbM9LH8Q,,,N,0,0,,,2014-04-13 07:21,2014-04-14 16:04,admin,admin,
2551,142648,6971,40276,7842,0,N,N,N,CP_Phys,TT_Task,DT_FixedDrtn,TK_NotStart,CZA-TK-3491-2240,Welding,8405,778,0,80,0,366.839891,366.839891,80,640,0,640,,,,2014-12-06 15:00,2014-12-15 15:00,,2014-09-07 07:00,2014-09-15 17:00,2014-09-07 07:00,2014-09-15 17:00,2014-09-07 07:00,2014-09-15 17:00,2014-12-06 15:00,2014-12-15 15:00,,PT_Normal,,,,,FZ/27pC2302eVxLkG5IDnQ,az1NcC3nO02DQCPFrzoBqg,,,N,0,0,,,2014-04-13 07:21,2014-04-14 16:04,admin,admin,
2552,142649,6971,40276,7842,0,N,N,N,CP_Phys,TT_Task,DT_FixedDrtn,TK_NotStart,CZA-TK-3491-2250,Inspection,8405,778,0,100,0,73.367978,73.367978,100,0,0,0,,,,2014-12-03 15:00,2014-12-15 15:00,,2014-09-04 07:00,2014-09-15 17:00,2014-09-04 07:00,2014-09-15 17:00,2014-09-04 07:00,2014-09-15 17:00,2014-12-03 15:00,2014-12-15 15:00,,PT_Normal,,,,,87p4X/R2qE2nPoDVSJ94xg,1g4DcC3l/UOMNTX0zTUuPQ,,,N,0,0,,,2014-04-13 07:21,2014-04-14 16:04,admin,admin,
2553,142650,6971,40209,7842,0,N,N,N,CP_Phys,TT_Task,DT_FixedDrtn,TK_NotStart,CZA-TK-3491-2260,"Jacking,Erection and Fit-up",8405,778,0,20,0,391.322326,391.322326,20,160,0,160,,,,2014-12-15 15:00,2014-12-17 15:00,,2014-09-16 07:00,2014-09-17 17:00,2014-09-16 07:00,2014-09-17 17:00,2014-09-16 07:00,2014-09-17 17:00,2014-12-15 15:00,2014-12-17 15:00,,PT_Normal,,,,,EQKhUxoqJEyKr9lPF1EAYA,doEJA0rE7kaEhd0r5ZNs4A,,,N,0,0,,,2014-04-13 07:21,2014-04-14 16:04,admin,admin,
2554,142651,6971,40209,7842,0,N,N,N,CP_Phys,TT_Task,DT_FixedDrtn,TK_NotStart,CZA-TK-3491-2270,Welding,8405,778,0,80,0,489.152907,489.152907,80,640,0,640,,,,2014-12-17 15:00,2014-12-27 15:00,,2014-09-18 07:00,2014-09-27 17:00,2014-09-18 07:00,2014-09-27 17:00,2014-09-18 07:00,2014-09-27 17:00,2014-12-17 15:00,2014-12-27 15:00,,PT_Normal,,,,,K5pza8zIAEu1N19uK/p+9A,QwysOlYnSUiue0ToUPEWdA,,,N,0,0,,,2014-04-13 07:21,2014-04-14 16:04,admin,admin,
2555,142652,6971,40209,7842,0,N,N,N,CP_Phys,TT_Task,DT_FixedDrtn,TK_NotStart,CZA-TK-3491-2280,Inspection,8405,778,0,100,0,97.830581,97.830581,100,0,0,0,,,,2014-12-15 15:00,2014-12-27 15:00,,2014-09-16 07:00,2014-09-27 17:00,2014-09-16 07:00,2014-09-27 17:00,2014-09-16 07:00,2014-09-27 17:00,2014-12-15 15:00,2014-12-27 15:00,,PT_Normal,,,,,q9RCtr1/SUyC8CJ8K62Nkw,zWgGVPCjE0SjgTDkccCc1A,,,N,0,0,,,2014-04-13 07:21,2014-04-14 16:04,admin,admin,
2556,142653,6971,40169,7842,0,N,N,N,CP_Phys,TT_Task,DT_FixedDrtn,TK_NotStart,CZA-TK-3491-2290,"Jacking,Erection and Fit-up",8405,778,0,20,0,489.194277,489.194277,20,160,0,160,,,,2014-12-27 15:00,2014-12-29 15:00,,2014-09-28 07:00,2014-09-29 17:00,2014-09-28 07:00,2014-09-29 17:00,2014-09-28 07:00,2014-09-29 17:00,2014-12-27 15:00,2014-12-29 15:00,,PT_Normal,,,,,yOYxGmXy/0aHQResUzX7RQ,MYB5DjD2YUK0NUBKBDDbBg,,,N,0,0,,,2014-04-13 07:21,2014-04-14 16:04,admin,admin,
2557,142654,6971,40169,7842,0,N,N,N,CP_Phys,TT_Task,DT_FixedDrtn,TK_NotStart,CZA-TK-3491-2300,Welding,8405,778,0,80,0,611.492846,611.492846,80,640,0,640,,,,2014-12-29 15:00,2015-01-07 15:00,,2014-09-30 07:00,2014-10-08 17:00,2014-09-30 07:00,2014-10-08 17:00,2014-09-30 07:00,2014-10-08 17:00,2014-12-29 15:00,2015-01-07 15:00,,PT_Normal,,,,,7VymSxZ2GkqjBEU8pAR5aA,5hOzE60t10+0McOEEuTE8w,,,N,0,0,,,2014-04-13 07:21,2014-04-14 16:04,admin,admin,
2558,142655,6971,40169,7842,0,N,N,N,CP_Phys,TT_Task,DT_FixedDrtn,TK_NotStart,CZA-TK-3491-2310,Inspection,8405,778,0,100,0,122.298569,122.298569,100,0,0,0,,,,2014-12-27 15:00,2015-01-07 15:00,,2014-09-28 07:00,2014-10-08 17:00,2014-09-28 07:00,2014-10-08 17:00,2014-09-28 07:00,2014-10-08 17:00,2014-12-27 15:00,2015-01-07 15:00,,PT_Normal,,,,,B5TzBS3cKkOaC06Ekg89QA,c/MjBw5NUUe8ylddLbFoyQ,,,N,0,0,,,2014-04-13 07:21,2014-04-14 16:04,admin,admin,
2559,142656,6971,40170,7842,0,N,N,N,CP_Phys,TT_Task,DT_FixedDrtn,TK_NotStart,CZA-TK-3491-2320,"Jacking, Erection and Fit-up",8405,778,0,20,0,587.070036,587.070036,20,160,0,160,,,,2015-01-07 15:00,2015-01-10 15:00,,2014-10-09 07:00,2014-10-11 17:00,2014-10-09 07:00,2014-10-11 17:00,2014-10-09 07:00,2014-10-11 17:00,2015-01-07 15:00,2015-01-10 15:00,,PT_Normal,,,,,SNNh0TPAyUeM9l9IprR4Wg,EGaKYKtHTEaDeQYMObPS0A,,,N,0,0,,,2014-04-13 07:21,2014-04-14 16:04,admin,admin,
2560,142657,6971,40170,7842,0,N,N,N,CP_Phys,TT_Task,DT_FixedDrtn,TK_NotStart,CZA-TK-3491-2330,Welding,8405,778,0,80,0,733.837546,733.837546,80,640,0,640,,,,2015-01-10 15:00,2015-01-19 15:00,,2014-10-12 07:00,2014-10-20 17:00,2014-10-12 07:00,2014-10-20 17:00,2014-10-12 07:00,2014-10-20 17:00,2015-01-10 15:00,2015-01-19 15:00,,PT_Normal,,,,,zg3gw8rErkis+hBqrJDFMA,XSoktqThqki3fb4PKrWKtw,,,N,0,0,,,2014-04-13 07:21,2014-04-14 16:04,admin,admin,
2561,142658,6971,40170,7842,0,N,N,N,CP_Phys,TT_Task,DT_FixedDrtn,TK_NotStart,CZA-TK-3491-2340,Inspection,8405,778,0,100,0,146.767509,146.767509,100,0,0,0,,,,2015-01-07 15:00,2015-01-19 15:00,,2014-10-09 07:00,2014-10-20 17:00,2014-10-09 07:00,2014-10-20 17:00,2014-10-09 07:00,2014-10-20 17:00,2015-01-07 15:00,2015-01-19 15:00,,PT_Normal,,,,,VH7SZ3msZECbWqJvX4MzrA,EaeaTT2qsE+1Ex8WFMtT6A,,,N,0,0,,,2014-04-13 07:21,2014-04-14 16:04,admin,admin,
2562,142659,6971,39962,7842,0,N,N,N,CP_Phys,TT_Task,DT_FixedDrtn,TK_NotStart,CZA-TK-3491-2520,Tank Calibration,8405,778,0,50,0,2000.192983,2000.192983,50,0,0,0,,,,2015-06-20 15:00,2015-06-25 15:00,,2015-03-22 07:00,2015-03-26 17:00,2015-03-22 07:00,2015-03-26 17:00,2015-03-22 07:00,2015-03-26 17:00,2015-06-20 15:00,2015-06-25 15:00,,PT_Normal,,,,,8504HC5SfkSyFXZPYup/Qw,NGZcgORQdUWkm77bknOdbQ,,,N,0,0,,,2014-04-13 07:21,2014-04-14 16:04,admin,admin,
2563,142660,6971,39962,7842,0,N,N,N,CP_Phys,TT_Task,DT_FixedDrtn,TK_NotStart,CZA-TK-3491-2530,Tank Handover,8405,778,0,20,0,2000.192983,2000.192983,20,0,0,0,,,,2015-06-25 15:00,2015-06-28 15:00,,2015-03-28 07:00,2015-03-29 17:00,2015-03-28 07:00,2015-03-29 17:00,2015-03-28 07:00,2015-03-29 17:00,2015-06-25 15:00,2015-06-28 15:00,,PT_Normal,,,,,rRPj3nGdc0qIIz36twKLeQ,97hI9qlvtkug0PnfYlI5uA,,,N,0,0,,,2014-04-13 07:21,2014-04-14 16:04,admin,admin,
2564,142661,6971,40004,7842,0,N,N,N,CP_Phys,TT_Task,DT_FixedDrtn,TK_NotStart,CZA-TK-3491-2510,"Blasting and Painting (Shell, Roof & Bottom)-Outside & Inside",8405,778,0,310,0,6000.578949,6000.578949,310,0,0,0,,,,2015-05-14 15:00,2015-06-20 15:00,,2015-02-14 07:00,2015-03-21 17:00,2015-02-14 07:00,2015-03-21 17:00,2015-02-14 07:00,2015-03-21 17:00,2015-05-14 15:00,2015-06-20 15:00,,PT_Normal,,,,,bPvxF9UFqU6gA7clCWuK0g,s6igBVXUR06LqRVkBnp6/w,,,N,0,0,,,2014-04-13 07:21,2014-04-14 16:04,admin,admin,
2565,142662,6971,39964,7842,0,N,N,N,CP_Phys,TT_Mile,DT_FixedDrtn,TK_NotStart,CZA-TK-3491-1890,Foundation Takeover From Client,,0,0,0,0,0,0,0,0,0,0,2014-04-20 00:00,,,2014-04-19 17:00,2014-04-19 17:00,,2014-04-20 07:00,2014-04-20 07:00,2014-04-20 07:00,2014-04-20 07:00,2014-04-20 07:00,2014-04-20 07:00,2014-04-19 17:00,2014-04-19 17:00,CS_MSO,PT_Normal,,,,,23xaQjWmzUCLlK/G9mwrNA,CqPA04lzsk6CtUyi0tJNRQ,,,N,0,0,,,2014-04-13 07:21,2014-04-13 07:42,admin,admin,
2566,142663,6971,39965,7842,0,N,N,N,CP_Phys,TT_Task,DT_FixedDrtn,TK_NotStart,CZA-TK-3491-1790,"Cutting, Bevelling and Rolling Shell No.7",8510,2968,0,20,0,670.3719,670.3719,20,0,0,0,,,,2015-02-11 15:00,2015-02-14 15:00,,2014-03-03 07:00,2014-03-04 17:00,2014-03-03 07:00,2014-03-04 17:00,2014-03-03 07:00,2014-03-04 17:00,2015-02-11 15:00,2015-02-14 15:00,,PT_Normal,,,,,riHTHeVgIkG7eLNQUNX/Fw,XhKFtWMY6kOQfKwpBlSORw,,,N,0,0,,,2014-04-13 07:21,2014-04-14 17:03,admin,admin,
2567,142664,6971,39965,7842,0,N,N,N,CP_Phys,TT_Task,DT_FixedDrtn,TK_NotStart,CZA-TK-3491-1800,"Cutting, Bevelling and Rolling Shell No.6",8510,2968,0,20,0,893.8896,893.8896,20,0,0,0,,,,2015-02-11 15:00,2015-02-14 15:00,,2014-03-03 07:00,2014-03-04 17:00,2014-03-03 07:00,2014-03-04 17:00,2014-03-03 07:00,2014-03-04 17:00,2015-02-11 15:00,2015-02-14 15:00,,PT_Normal,,,,,o7un+a4xSEqNIb4EqGUK3Q,zdTAuJcT7UqzIbCJd07/rA,,,N,0,0,,,2014-04-13 07:21,2014-04-14 17:03,admin,admin,
2568,142665,6971,39965,7842,0,N,N,N,CP_Phys,TT_Task,DT_FixedDrtn,TK_NotStart,CZA-TK-3491-1810,"Cutting, Bevelling and Rolling Shell No.5",8510,2968,0,20,0,1117.4565,1117.4565,20,0,0,0,,,,2015-02-14 15:00,2015-02-16 15:00,,2014-03-05 07:00,2014-03-06 17:00,2014-03-05 07:00,2014-03-06 17:00,2014-03-05 07:00,2014-03-06 17:00,2015-02-14 15:00,2015-02-16 15:00,,PT_Normal,,,,,PeIw4HZIiEOw2SQjIQ/0+w,43acwQOy402WsxcyklkGdg,,,N,0,0,,,2014-04-13 07:21,2014-04-14 17:03,admin,admin,
2569,142666,6971,39965,7842,0,N,N,N,CP_Phys,TT_Task,DT_FixedDrtn,TK_NotStart,CZA-TK-3491-1820,"Cutting, Bevelling and Rolling Shell No.4",8510,2968,0,20,0,1341.0321,1341.0321,20,0,0,0,,,,2015-02-14 15:00,2015-02-16 15:00,,2014-03-05 07:00,2014-03-06 17:00,2014-03-05 07:00,2014-03-06 17:00,2014-03-05 07:00,2014-03-06 17:00,2015-02-14 15:00,2015-02-16 15:00,,PT_Normal,,,,,WNUlBTXXCkGezkKVmEkARA,7fpyO1njeE+m5ORB1VIfiw,,,N,0,0,,,2014-04-13 07:21,2014-04-14 17:03,admin,admin,
2570,142667,6971,39965,7842,0,N,N,N,CP_Phys,TT_Task,DT_FixedDrtn,TK_NotStart,CZA-TK-3491-1830,"Cutting, Bevelling and Rolling Shell No.3",8510,2968,0,20,0,1564.6437,1564.6437,20,0,0,0,,,,2015-02-16 15:00,2015-02-18 15:00,,2014-03-08 07:00,2014-03-09 17:00,2014-03-08 07:00,2014-03-09 17:00,2014-03-08 07:00,2014-03-09 17:00,2015-02-16 15:00,2015-02-18 15:00,,PT_Normal,,,,,tbRygAHAb0OP8EkHOpG0DA,0vFBsmKl8kqYiymqXevblw,,,N,0,0,,,2014-04-13 07:21,2014-04-14 17:03,admin,admin,
2571,142668,6971,39965,7842,0,N,N,N,CP_Phys,TT_Task,DT_FixedDrtn,TK_NotStart,CZA-TK-3491-1840,"Cutting, Bevelling and Rolling Shell No.2",8510,2968,0,20,0,1713.7494,1713.7494,20,0,0,0,,,,2015-02-16 15:00,2015-02-18 15:00,,2014-03-08 07:00,2014-03-09 17:00,2014-03-08 07:00,2014-03-09 17:00,2014-03-08 07:00,2014-03-09 17:00,2015-02-16 15:00,2015-02-18 15:00,,PT_Normal,,,,,9bzlyH4ClUiKZpfA+kwrgQ,u1c9zuP01Um+Ni2o+/3cYA,,,N,0,0,,,2014-04-13 07:21,2014-04-14 17:03,admin,admin,
2572,142669,6971,39965,7842,0,N,N,N,CP_Phys,TT_Task,DT_FixedDrtn,TK_NotStart,CZA-TK-3491-1850,"Cutting, Bevelling and Rolling Shell No.1",8510,2968,0,20,0,1937.4147,1937.4147,20,0,0,0,,,,2015-02-18 15:00,2015-02-21 15:00,,2014-03-10 07:00,2014-03-11 17:00,2014-03-10 07:00,2014-03-11 17:00,2014-03-10 07:00,2014-03-11 17:00,2015-02-18 15:00,2015-02-21 15:00,,PT_Normal,,,,,qMLH8gzqvUeOEpBXha5vEw,MKzcqEEfS0iDxYBWo6+kJw,,,N,0,0,,,2014-04-13 07:21,2014-04-14 17:03,admin,admin,
2573,142670,6971,39965,7842,0,N,N,N,CP_Phys,TT_Task,DT_FixedDrtn,TK_NotStart,CZA-TK-3491-1870,"Cutting, Fit-up & Welding of Shell Nozzles, Manholes and Other Appurtanances",8510,2968,0,70,0,0,0,70,0,0,0,,,,2015-02-21 15:00,2015-03-01 15:00,,2014-03-12 07:00,2014-03-19 17:00,2014-03-12 07:00,2014-03-19 17:00,2014-03-12 07:00,2014-03-19 17:00,2015-02-21 15:00,2015-03-01 15:00,,PT_Normal,,,,,JAO2iexi8ESIxHeML0Dl7g,Qm5iEJTVrEyozM0fAuMwIQ,,,N,0,0,,,2014-04-13 07:21,2014-04-14 17:03,admin,admin,
2574,142671,6971,39965,7842,0,N,N,N,CP_Phys,TT_Task,DT_FixedDrtn,TK_NotStart,CZA-TK-3491-1880,"Cutting, Fit-up & Welding of Stairway Platform, Gratings and  Handrails",8510,2968,2190,100,0,0,0,100,0,0,0,,,,2015-02-25 15:00,2015-03-09 15:00,,2014-03-17 07:00,2014-03-27 17:00,2014-03-17 07:00,2014-03-27 17:00,2014-03-17 07:00,2014-03-27 17:00,2015-02-25 15:00,2015-03-09 15:00,,PT_Normal,,,,,e/BUIu51SkqUBRQSCHUr0Q,7KImPvny/0Gc+q4Gc2lsuQ,,,N,0,0,,,2014-04-13 07:21,2014-04-14 17:03,admin,admin,
2575,142672,6971,39965,7842,0,N,N,N,CP_Phys,TT_Task,DT_FixedDrtn,TK_NotStart,CZA-TK-3491-1680,Cutting of Annular Plates,8510,2968,0,30,0,537.2208,537.2208,30,0,0,0,,,,2015-01-20 15:00,2015-01-24 15:00,,2014-02-09 07:00,2014-02-11 17:00,2014-02-09 07:00,2014-02-11 17:00,2014-02-09 07:00,2014-02-11 17:00,2015-01-20 15:00,2015-01-24 15:00,,PT_Normal,,,,,+kZ+6HYWg0uSORX1EVycPw,OrEtq2DWx0KKbaVSXYMTPQ,,,N,0,0,,,2014-04-13 07:21,2014-04-14 17:03,admin,admin,
2576,142673,6971,39965,7842,0,N,N,N,CP_Phys,TT_Task,DT_FixedDrtn,TK_NotStart,CZA-TK-3491-1690,Cutting of Bottom Plates & Compression Ring,8510,2968,0,30,0,2146.4193,2146.4193,30,0,0,0,,,,2015-01-20 15:00,2015-01-24 15:00,,2014-02-09 07:00,2014-02-11 17:00,2014-02-09 07:00,2014-02-11 17:00,2014-02-09 07:00,2014-02-11 17:00,2015-01-20 15:00,2015-01-24 15:00,,PT_Normal,,,,,RhNmcfHabEyt8dqYqVSWyA,5m1A5vwkr0maIRHPCQYzTA,,,N,0,0,,,2014-04-13 07:21,2014-04-14 17:03,admin,admin,
2577,142674,6971,39965,7842,0,N,N,N,CP_Phys,TT_Task,DT_FixedDrtn,TK_NotStart,CZA-TK-3491-1700,"Cutting, Bevelling & Rolling  Shell No.8",8510,2968,0,20,0,384.8352,384.8352,20,0,0,0,,,,2015-01-24 15:00,2015-01-26 15:00,,2014-02-12 07:00,2014-02-13 17:00,2014-02-12 07:00,2014-02-13 17:00,2014-02-12 07:00,2014-02-13 17:00,2015-01-24 15:00,2015-01-26 15:00,,PT_Normal,,,,,Okj3FENvmEabgd2qfJHQ4Q,EzGMxfPDukKZzRPkhM99YA,,,N,0,0,,,2014-04-13 07:21,2014-04-14 17:03,admin,admin,
2578,142675,6971,39965,7842,0,N,N,N,CP_Phys,TT_Task,DT_FixedDrtn,TK_NotStart,CZA-TK-3491-1710,"Cutting, Bevelling and Rolling Shell No.9",8510,2968,0,20,0,595.8738,595.8738,20,0,0,0,,,,2015-01-24 15:00,2015-01-26 15:00,,2014-02-12 07:00,2014-02-13 17:00,2014-02-12 07:00,2014-02-13 17:00,2014-02-12 07:00,2014-02-13 17:00,2015-01-24 15:00,2015-01-26 15:00,,PT_Normal,,,,,s4JHkqUv0UyKiRu3pIEAqQ,DjS2Y8vhOEmn2nIPYvg5wQ,,,N,0,0,,,2014-04-13 07:21,2014-04-14 17:03,admin,admin,
2579,142676,6971,39965,7842,0,N,N,N,CP_Phys,TT_Task,DT_FixedDrtn,TK_NotStart,CZA-TK-3491-1750,"Cutting, Fit-up, and Welding of Roof Structure & Stairways",8510,2968,0,140,0,2407.086,2407.086,140,0,0,0,,,,2015-01-26 15:00,2015-02-11 15:00,,2014-02-15 07:00,2014-03-02 17:00,2014-02-15 07:00,2014-03-02 17:00,2014-02-15 07:00,2014-03-02 17:00,2015-01-26 15:00,2015-02-11 15:00,,PT_Normal,,,,,CEHEXpBLvkSN5RwDiAT8Jw,BgsidCoCpkubSHy3b4VYzQ,,,N,0,0,,,2014-04-13 07:21,2014-04-14 17:03,admin,admin,
2580,142677,6971,39965,7842,0,N,N,N,CP_Phys,TT_Task,DT_FixedDrtn,TK_NotStart,CZA-TK-3491-1760,Cutting of Roof Plates,8510,2968,0,20,0,1974.999,1974.999,20,0,0,0,,,,2015-01-28 11:00,2015-01-31 11:00,,2014-02-16 13:00,2014-02-18 13:00,2014-02-16 13:00,2014-02-18 13:00,2014-02-16 13:00,2014-02-18 13:00,2015-01-28 11:00,2015-01-31 11:00,,PT_Normal,,,,,bUzgoDWv3EGktmsXPqhEBQ,LBpc6w5hYEGhap8bzZ413w,,,N,0,0,,,2014-04-13 07:21,2014-04-14 17:03,admin,admin,
2581,142678,6971,39965,7842,0,N,N,N,CP_Phys,TT_Task,DT_FixedDrtn,TK_NotStart,CZA-TK-3491-1770,"Cutting, Fit-up, & Welding of Roof Nozzles, Manholes & other Appurtanances",8510,2968,0,60,0,0,0,60,0,0,0,,,,2015-01-31 11:00,2015-02-07 11:00,,2014-02-18 13:00,2014-02-25 13:00,2014-02-18 13:00,2014-02-25 13:00,2014-02-18 13:00,2014-02-25 13:00,2015-01-31 11:00,2015-02-07 11:00,,PT_Normal,,,,,orPEGONfaUOV0uNnjXBtYg,kvnKhkBMQUuqoidTkBn5wg,,,N,0,0,,,2014-04-13 07:21,2014-04-14 17:03,admin,admin,
2582,142679,6971,39965,7842,0,N,N,N,CP_Phys,TT_Task,DT_FixedDrtn,TK_NotStart,CZA-TK-3491-1780,"Cutting, Fit-up & Welding of Roof Platform, Gratings and Handrails",8510,2968,0,120,0,0,0,120,0,0,0,,,,2015-02-05 09:00,2015-02-19 09:00,,2014-02-24 11:00,2014-03-10 11:00,2014-02-24 11:00,2014-03-10 11:00,2014-02-24 11:00,2014-03-10 11:00,2015-02-05 09:00,2015-02-19 09:00,,PT_Normal,,,,,TBz/JLUugkWfnIWBs1ldww,XxdWTwCfokm6Jh3M1efqbA,,,N,0,0,,,2014-04-13 07:21,2014-04-14 17:03,admin,admin,
2583,142680,6971,39895,7842,0,N,N,N,CP_Phys,TT_FinMile,DT_FixedDrtn,TK_NotStart,CZA-2580,Complete handover to Client,,0,0,0,0,0,0,0,0,0,0,,,,2015-06-29 13:00,2015-06-29 13:00,,2015-06-29 13:00,2015-06-29 13:00,2015-06-29 13:00,2015-06-29 13:00,2015-06-29 13:00,2015-06-29 13:00,2015-06-29 13:00,2015-06-29 13:00,,PT_Normal,,,,,0bSQfV8J20G+tZz02DPqbQ,,,,Y,0,0,,,2014-04-13 07:21,2014-04-13 08:09,admin,admin,
2584,142681,6971,40037,7842,0,N,N,N,CP_Phys,TT_Task,DT_FixedDrtn,TK_NotStart,CZA-TK-3202-1890,Tank Calibration,8388,2782,0,50,0,21.669852,21.669852,50,0,0,0,,,,2015-06-20 15:00,2015-06-25 15:00,,2014-07-30 13:00,2014-08-05 13:00,2014-07-30 13:00,2014-08-05 13:00,2014-07-30 13:00,2014-08-05 13:00,2015-06-20 15:00,2015-06-25 15:00,,PT_Normal,,,,,UnW/C/Gye0mTo5UePjC5Zw,VNb3oLScH0SXvOagPeHRfw,,,N,0,0,,,2014-04-13 07:21,2014-04-14 16:04,admin,admin,
2585,142682,6971,40037,7842,0,N,N,N,CP_Phys,TT_Task,DT_FixedDrtn,TK_NotStart,CZA-TK-3202-1900,Tank Handover,8388,2782,1270,20,0,21.669852,21.669852,20,0,0,0,,,,2015-06-25 15:00,2015-06-28 15:00,,2014-08-05 13:00,2014-08-07 13:00,2014-08-05 13:00,2014-08-07 13:00,2014-08-05 13:00,2014-08-07 13:00,2015-06-25 15:00,2015-06-28 15:00,,PT_Normal,,,,,RsOt1lU6PEGS0mcNA2sO+g,foAE84Z4qE6l1KecZ6pIPg,,,N,0,0,,,2014-04-13 07:21,2014-04-14 16:04,admin,admin,
2586,142683,6971,39970,7842,0,N,N,N,CP_Phys,TT_Task,DT_FixedDrtn,TK_NotStart,CZA-TK-3202-1870,"Filling, Holding and Draining of Water",8388,2782,0,30,0,108.349259,108.349259,30,0,0,0,,,,2015-06-10 15:00,2015-06-14 15:00,,2014-07-21 13:00,2014-07-24 13:00,2014-07-21 13:00,2014-07-24 13:00,2014-07-21 13:00,2014-07-24 13:00,2015-06-10 15:00,2015-06-14 15:00,,PT_Normal,,,,,bFfLpJiKk0GD7VkUJGLV3A,W66AoWGKtUa0So514ceC5A,,,N,0,0,,,2014-04-13 07:21,2014-04-14 16:04,admin,admin,
2587,142684,6971,40101,7842,0,N,N,N,CP_Phys,TT_Task,DT_FixedDrtn,TK_NotStart,CZA-TK-3202-1410,Cutting of Bottom Plates,8493,4252,0,10,0,26.0613,26.0613,10,0,0,0,,,,2015-05-18 09:00,2015-05-19 09:00,,2014-01-07 07:00,2014-01-07 17:00,2014-01-07 07:00,2014-01-07 17:00,2014-01-07 07:00,2014-01-07 17:00,2015-05-18 09:00,2015-05-19 09:00,,PT_Normal,,,,,jM4et6gtVEOC7urwr4idlg,Wkz0tR4Y+UWfuOUhAKnNjw,,,N,0,0,,,2014-04-13 07:21,2014-04-14 17:03,admin,admin,
2588,142685,6971,40101,7842,0,N,N,N,CP_Phys,TT_Task,DT_FixedDrtn,TK_NotStart,CZA-TK-3202-1420,"Cutting, Bevelling and Rolling No.1",8493,4252,0,10,0,42.678,42.678,10,0,0,0,,,,2015-05-19 09:00,2015-05-20 09:00,,2014-01-08 07:00,2014-01-08 17:00,2014-01-08 07:00,2014-01-08 17:00,2014-01-08 07:00,2014-01-08 17:00,2015-05-19 09:00,2015-05-20 09:00,,PT_Normal,,,,,fATpfnkIc0C7Rbg92h+q9w,DKOtk10LLEeVK6BloCBwEA,,,N,0,0,,,2014-04-13 07:21,2014-04-14 17:03,admin,admin,
2589,142686,6971,40101,7842,0,N,N,N,CP_Phys,TT_Task,DT_FixedDrtn,TK_NotStart,CZA-TK-3202-1430,"Cutting, Bevelling and Rolling No.2",8493,4252,0,10,0,38.2326,38.2326,10,0,0,0,,,,2015-05-20 09:00,2015-05-21 09:00,,2014-01-09 07:00,2014-01-09 17:00,2014-01-09 07:00,2014-01-09 17:00,2014-01-09 07:00,2014-01-09 17:00,2015-05-20 09:00,2015-05-21 09:00,,PT_Normal,,,,,GQlUP/aAj0uDPPerOd70cg,cIPn3udX4kiq5XcLTEY50w,,,N,0,0,,,2014-04-13 07:21,2014-04-14 17:03,admin,admin,
2590,142687,6971,40101,7842,0,N,N,N,CP_Phys,TT_Task,DT_FixedDrtn,TK_NotStart,CZA-TK-3202-1440,"Cutting, Fit-up and Welding of Shell Nozzles, Manholes and Other Appurtances",8493,4252,0,40,0,0,0,40,0,0,0,,,,2015-05-21 09:00,2015-05-26 09:00,,2014-01-11 07:00,2014-01-14 17:00,2014-01-11 07:00,2014-01-14 17:00,2014-01-11 07:00,2014-01-14 17:00,2015-05-21 09:00,2015-05-26 09:00,,PT_Normal,,,,,2DEWjLwwgk2YirDU3vmhEA,7+gRtf8gMky6G6xaEIxRZw,,,N,0,0,,,2014-04-13 07:21,2014-04-14 17:03,admin,admin,
2591,142688,6971,40101,7842,0,N,N,N,CP_Phys,TT_Task,DT_FixedDrtn,TK_NotStart,CZA-TK-3202-1450,"Cutting, Bevelling and Rolling Curb Angle",8493,4252,0,10,0,3.1611,3.1611,10,0,0,0,,,,2015-05-26 09:00,2015-05-27 09:00,,2014-01-15 07:00,2014-01-15 17:00,2014-01-15 07:00,2014-01-15 17:00,2014-01-15 07:00,2014-01-15 17:00,2015-05-26 09:00,2015-05-27 09:00,,PT_Normal,,,,,0D4m96zyfkCm5cIanIRkdQ,QSt/rx5k0keUf1CXIF8j7g,,,N,0,0,,,2014-04-13 07:21,2014-04-14 17:03,admin,admin,
2592,142689,6971,40101,7842,0,N,N,N,CP_Phys,TT_Task,DT_FixedDrtn,TK_NotStart,CZA-TK-3202-1520,"Cutting,Fit-up and Welding of Roof Plates",8493,4252,0,10,0,15.5145,15.5145,10,0,0,0,,,,2015-05-27 09:00,2015-05-28 09:00,,2014-01-16 07:00,2014-01-16 17:00,2014-01-16 07:00,2014-01-16 17:00,2014-01-16 07:00,2014-01-16 17:00,2015-05-27 09:00,2015-05-28 09:00,,PT_Normal,,,,,SwLWbevWq0WiqJwqjuX7Bg,Oa6+djdLz0Wdc0EZCbfMnw,,,N,0,0,,,2014-04-13 07:21,2014-04-14 17:03,admin,admin,
2593,142690,6971,40101,7842,0,N,N,N,CP_Phys,TT_Task,DT_FixedDrtn,TK_NotStart,CZA-TK-3202-1530,"Cutting, Fit-up and Welding of Roof Platform, Gratings and Handrails",8493,4252,0,50,0,0,0,50,0,0,0,,,,2015-05-27 09:00,2015-06-02 09:00,,2014-01-16 07:00,2014-01-21 17:00,2014-01-16 07:00,2014-01-21 17:00,2014-01-16 07:00,2014-01-21 17:00,2015-05-27 09:00,2015-06-02 09:00,,PT_Normal,,,,,QTlOxlA8akSGBjYUs+Qc5w,Sx3aT3POIUmAJ6qsh1YdFQ,,,N,0,0,,,2014-04-13 07:21,2014-04-14 17:03,admin,admin,
2594,142691,6971,40101,7842,0,N,N,N,CP_Phys,TT_Task,DT_FixedDrtn,TK_NotStart,CZA-TK-3202-1540,"Cutting, Fit-up & Welding of Roof Nozzles,Manholes and Other Appurtances",8493,4252,0,40,0,0,0,40,0,0,0,,,,2015-05-27 09:00,2015-06-01 09:00,,2014-01-16 07:00,2014-01-20 17:00,2014-01-16 07:00,2014-01-20 17:00,2014-01-16 07:00,2014-01-20 17:00,2015-05-27 09:00,2015-06-01 09:00,,PT_Normal,,,,,bof1fnqcMEiE+xLMDuNDZg,X0WcLORb2Uq+OsEWdLA63g,,,N,0,0,,,2014-04-13 07:21,2014-04-14 17:03,admin,admin,
2595,142692,6971,40101,7842,0,N,N,N,CP_Phys,TT_Task,DT_FixedDrtn,TK_NotStart,CZA-TK-3202-1550,"Cutting, Fit-up and Welding of Stairway Platform, Gratings and Handrails",8493,4252,413.166667,60,0,0,0,60,0,0,0,,,,2015-05-28 15:00,2015-06-04 15:00,,2014-01-18 13:00,2014-01-25 13:00,2014-01-18 13:00,2014-01-25 13:00,2014-01-18 13:00,2014-01-25 13:00,2015-05-28 15:00,2015-06-04 15:00,,PT_Normal,,,,,NipXFpA1KEyFlc/05RmZDw,UH7SsUqgG02AK9F4Ch346A,,,N,0,0,,,2014-04-13 07:21,2014-04-15 07:43,admin,admin,
2596,142693,6971,39972,7842,0,N,N,N,CP_Phys,TT_Mile,DT_FixedDrtn,TK_NotStart,CZA-TK-3202-1560,Foundation Takeover from Client,,0,0,0,0,0,0,0,0,0,0,2014-03-01 00:00,,,2014-02-27 17:00,2014-02-27 17:00,,2014-03-01 07:00,2014-03-01 07:00,2014-03-01 07:00,2014-03-01 07:00,2014-03-01 07:00,2014-03-01 07:00,2014-02-27 17:00,2014-02-27 17:00,CS_MSO,PT_Normal,,,,,WXkwcbnnY0uh1FdvSN1iow,gJqX+hKgOUKp04dOZQQLBg,,,N,0,0,,,2014-04-13 07:21,2014-04-13 07:42,admin,admin,
2597,142694,6971,40129,7842,0,N,N,N,CP_Phys,TT_Task,DT_FixedDrtn,TK_NotStart,CZA-TK-3202-1880,"Blasting and Painting of Bottom, Shell and Roof (Inside & Outside)",8388,2782,0,50,0,65.009555,65.009555,50,50,0,50,,,,2015-06-14 15:00,2015-06-20 15:00,,2014-07-24 13:00,2014-07-30 13:00,2014-07-24 13:00,2014-07-30 13:00,2014-07-24 13:00,2014-07-30 13:00,2015-06-14 15:00,2015-06-20 15:00,,PT_Normal,,,,,oe0tX0DEpkeflQC1bC+Fsg,F8sxCu7P10i8KjAnLw2wIA,,,N,0,0,,,2014-04-13 07:21,2014-04-14 16:04,admin,admin,
2598,142695,6971,40602,7842,0,N,N,N,CP_Phys,TT_Task,DT_FixedDrtn,TK_NotStart,CZA-TK-3202-1750,Laying and Fit-up,8388,3838.833333,0,10,0,6.791857,6.791857,10,30,0,30,,,,2015-06-01 13:50,2015-06-02 13:50,,2014-03-10 15:00,2014-03-11 15:00,2014-03-10 15:00,2014-03-11 15:00,2014-03-10 15:00,2014-03-11 15:00,2015-06-01 13:50,2015-06-02 13:50,,PT_Normal,,,,,Ffk2sxBdW0aWOubYdmbXTQ,p0B6AyDm0kO3GcSjTYnoWQ,,,N,0,0,,,2014-04-13 07:21,2014-04-15 07:43,admin,admin,
2599,142696,6971,40602,7842,0,N,N,N,CP_Phys,TT_Task,DT_FixedDrtn,TK_NotStart,CZA-TK-3202-1760,Welding,8388,3838.833333,0,20,0,8.489821,8.489821,20,60,0,60,,,,2015-06-02 13:50,2015-06-04 13:50,,2014-03-11 15:00,2014-03-13 15:00,2014-03-11 15:00,2014-03-13 15:00,2014-03-11 15:00,2014-03-13 15:00,2015-06-02 13:50,2015-06-04 13:50,,PT_Normal,,,,,24u2lirMgEqmHaRYh788mg,qkGz3sNMSUiCbUCb89hSZA,,,N,0,0,,,2014-04-13 07:21,2014-04-15 07:43,admin,admin,
2600,142697,6971,40602,7842,0,N,N,N,CP_Phys,TT_Task,DT_FixedDrtn,TK_NotStart,CZA-TK-3202-1770,Inspection,8388,3838.833333,0,20,0,1.697964,1.697964,20,0,0,0,,,,2015-06-02 13:50,2015-06-04 13:50,,2014-03-11 15:00,2014-03-13 15:00,2014-03-11 15:00,2014-03-13 15:00,2014-03-11 15:00,2014-03-13 15:00,2015-06-02 13:50,2015-06-04 13:50,,PT_Normal,,,,,qTgX6Jq4Dk+zzjC0vhnS3w,fdsUTSGr20WI2wvtl4V8sw,,,N,0,0,,,2014-04-13 07:21,2014-04-15 07:43,admin,admin,
2601,142698,6971,40603,7842,0,N,N,N,CP_Phys,TT_Task,DT_FixedDrtn,TK_NotStart,CZA-TK-3202-1780,Installation and Fit-up,8388,3838.833333,0,10,0,0,0,10,20,0,20,,,,2015-06-04 13:50,2015-06-06 13:50,,2014-03-13 15:00,2014-03-15 15:00,2014-03-13 15:00,2014-03-15 15:00,2014-03-13 15:00,2014-03-15 15:00,2015-06-04 13:50,2015-06-06 13:50,,PT_Normal,,,,,qafV3aV4wUKZ4nTccJGVow,wLG/Pi4iKUaALQN5n9zpoQ,,,N,0,0,,,2014-04-13 07:21,2014-04-15 07:43,admin,admin,
2602,142699,6971,40603,7842,0,N,N,N,CP_Phys,TT_Task,DT_FixedDrtn,TK_NotStart,CZA-TK-3202-1790,Welding,8388,3838.833333,0,21.166667,0,0,0,21.166667,21.166667,0,21.166667,,,,2015-06-06 13:50,2015-06-08 15:00,,2014-03-15 15:00,2014-03-17 16:10,2014-03-15 15:00,2014-03-17 16:10,2014-03-15 15:00,2014-03-17 16:10,2015-06-06 13:50,2015-06-08 15:00,,PT_Normal,,,,,x+Xkaf8v/UK3ayktGfKhyA,2y/H04U6p0WkLkFx3jqqhA,,,N,0,0,,,2014-04-13 07:21,2014-04-15 07:43,admin,admin,
2603,142700,6971,40603,7842,0,N,N,N,CP_Phys,TT_Task,DT_FixedDrtn,TK_NotStart,CZA-TK-3202-1800,Inspection,8388,3838.833333,0,30,0,0,0,30,0,0,0,,,,2015-06-04 15:00,2015-06-08 15:00,,2014-03-13 16:10,2014-03-17 16:10,2014-03-13 16:10,2014-03-17 16:10,2014-03-13 16:10,2014-03-17 16:10,2015-06-04 15:00,2015-06-08 15:00,,PT_Normal,,,,,qHEcWifa606z2qAnIoiTkg,7a4SAYdIJUiGEHMIJg8dqg,,,N,0,0,,,2014-04-13 07:21,2014-04-15 07:43,admin,admin,
2604,142701,6971,40395,7842,0,N,N,N,CP_Phys,TT_Task,DT_FixedDrtn,TK_NotStart,CZA-TK-3202-1840,Erection and Fit-up,8388,3838.833333,0,20,0,0,0,20,20,0,20,,,,2015-06-04 15:00,2015-06-07 15:00,,2014-03-13 16:10,2014-03-16 16:10,2014-03-13 16:10,2014-03-16 16:10,2014-03-13 16:10,2014-03-16 16:10,2015-06-04 15:00,2015-06-07 15:00,,PT_Normal,,,,,UHtrV1r6QUKkTQIMNxzzSg,TEzuokol80Cp5jySaHgRaw,,,N,0,0,,,2014-04-13 07:21,2014-04-15 07:43,admin,admin,
2605,142702,6971,40395,7842,0,N,N,N,CP_Phys,TT_Task,DT_FixedDrtn,TK_NotStart,CZA-TK-3202-1850,Welding,8388,3838.833333,0,30,0,0,0,30,90,0,90,,,,2015-06-07 15:00,2015-06-10 15:00,,2014-03-16 16:10,2014-03-19 16:10,2014-03-16 16:10,2014-03-19 16:10,2014-03-16 16:10,2014-03-19 16:10,2015-06-07 15:00,2015-06-10 15:00,,PT_Normal,,,,,0w0Vd2bl6k+AatGWXp0VFw,4GnWDViG7EKgRpMlkUVJOg,,,N,0,0,,,2014-04-13 07:21,2014-04-15 07:43,admin,admin,
2606,142703,6971,40395,7842,0,N,N,N,CP_Phys,TT_Task,DT_FixedDrtn,TK_NotStart,CZA-TK-3202-1860,Inspection,8388,3838.833333,1056.833333,50,0,0,0,50,0,0,0,,,,2015-06-04 15:00,2015-06-10 15:00,,2014-03-13 16:10,2014-03-19 16:10,2014-03-13 16:10,2014-03-19 16:10,2014-03-13 16:10,2014-03-19 16:10,2015-06-04 15:00,2015-06-10 15:00,,PT_Normal,,,,,Vuc6Mj+3jE+vglCtb9SJDw,4A9NDtaftUOezNEJgMWBhA,,,N,0,0,,,2014-04-13 07:21,2014-04-15 07:43,admin,admin,
2607,142704,6971,40187,7842,0,N,N,N,CP_Phys,TT_Task,DT_FixedDrtn,TK_NotStart,CZA-TK-3202-1570,Erection and Fit-up,8388,3838.833333,0,10,0,11.40898,11.40898,10,30,0,30,,,,2015-05-23 13:50,2015-05-24 13:50,,2014-03-01 15:00,2014-03-02 15:00,2014-03-01 15:00,2014-03-02 15:00,2014-03-01 15:00,2014-03-02 15:00,2015-05-23 13:50,2015-05-24 13:50,,PT_Normal,,,,,aNiNh+khqkKB4yLh9TXqag,8yFK7vMbcE6smfc6HVq2qA,,,N,0,0,,,2014-04-13 07:21,2014-04-15 07:43,admin,admin,
2608,142705,6971,40187,7842,0,N,N,N,CP_Phys,TT_Task,DT_FixedDrtn,TK_NotStart,CZA-TK-3202-1580,Welding,8388,3838.833333,0,10,0,14.261225,14.261225,10,0,0,0,,,,2015-05-24 13:50,2015-05-25 13:50,,2014-03-02 15:00,2014-03-03 15:00,2014-03-02 15:00,2014-03-03 15:00,2014-03-02 15:00,2014-03-03 15:00,2015-05-24 13:50,2015-05-25 13:50,,PT_Normal,,,,,qIRYogVcgEO5ST7toTQi4Q,PpGeLDHwBUK4Gapa07pfbw,,,N,0,0,,,2014-04-13 07:21,2014-04-15 07:43,admin,admin,
2609,142706,6971,40187,7842,0,N,N,N,CP_Phys,TT_Task,DT_FixedDrtn,TK_NotStart,CZA-TK-3202-1590,Inspection,8388,3838.833333,0,20,0,2.852245,2.852245,20,0,0,0,,,,2015-05-23 13:50,2015-05-25 13:50,,2014-03-01 15:00,2014-03-03 15:00,2014-03-01 15:00,2014-03-03 15:00,2014-03-01 15:00,2014-03-03 15:00,2015-05-23 13:50,2015-05-25 13:50,,PT_Normal,,,,,XuhLqwF5Tk2azPZP5lj6rg,4CO/+hmOv0icurOI4SEDRw,,,N,0,0,,,2014-04-13 07:21,2014-04-15 07:43,admin,admin,
2610,142707,6971,40188,7842,0,N,N,N,CP_Phys,TT_Task,DT_FixedDrtn,TK_NotStart,CZA-TK-3202-1600,Erection and Fit-up,8388,3838.833333,0,10,0,18.683352,18.683352,10,0,0,0,,,,2015-05-25 13:50,2015-05-26 13:50,,2014-03-03 15:00,2014-03-04 15:00,2014-03-03 15:00,2014-03-04 15:00,2014-03-03 15:00,2014-03-04 15:00,2015-05-25 13:50,2015-05-26 13:50,,PT_Normal,,,,,r6vGKNQebkqnqJSyfRx6dA,LTNX/4Z6PEGH17Fz/nGuHQ,,,N,0,0,,,2014-04-13 07:21,2014-04-15 07:43,admin,admin,
2611,142708,6971,40188,7842,0,N,N,N,CP_Phys,TT_Task,DT_FixedDrtn,TK_NotStart,CZA-TK-3202-1610,Welding,8388,3838.833333,0,10,0,23.35419,23.35419,10,30,0,30,,,,2015-05-26 13:50,2015-05-27 13:50,,2014-03-04 15:00,2014-03-05 15:00,2014-03-04 15:00,2014-03-05 15:00,2014-03-04 15:00,2014-03-05 15:00,2015-05-26 13:50,2015-05-27 13:50,,PT_Normal,,,,,6j6iItUedkqXLm9ZBoJt2g,1Aq8yP14+US9WntfLMKzwg,,,N,0,0,,,2014-04-13 07:21,2014-04-15 07:43,admin,admin,
2612,142709,6971,40188,7842,0,N,N,N,CP_Phys,TT_Task,DT_FixedDrtn,TK_NotStart,CZA-TK-3202-1620,Inspection,8388,3838.833333,0,20,0,4.670838,4.670838,20,0,0,0,,,,2015-05-25 13:50,2015-05-27 13:50,,2014-03-03 15:00,2014-03-05 15:00,2014-03-03 15:00,2014-03-05 15:00,2014-03-03 15:00,2014-03-05 15:00,2015-05-25 13:50,2015-05-27 13:50,,PT_Normal,,,,,YwSlJZa26kGwjxA/KQ20Dg,UMd1EBOY60i4xB0vosSR8g,,,N,0,0,,,2014-04-13 07:21,2014-04-15 07:43,admin,admin,
2613,142710,6971,40189,7842,0,N,N,N,CP_Phys,TT_Task,DT_FixedDrtn,TK_NotStart,CZA-TK-3202-1630,Erection and Fit-up,8388,3838.833333,0,10,0,16.737268,16.737268,10,20,0,20,,,,2015-05-27 13:50,2015-05-28 13:50,,2014-03-05 15:00,2014-03-06 15:00,2014-03-05 15:00,2014-03-06 15:00,2014-03-05 15:00,2014-03-06 15:00,2015-05-27 13:50,2015-05-28 13:50,,PT_Normal,,,,,FVFxPq8sgEmmVZCtCLU55Q,nlpD+N/8o021eu6/EykLLA,,,N,0,0,,,2014-04-13 07:21,2014-04-15 07:43,admin,admin,
2614,142711,6971,40189,7842,0,N,N,N,CP_Phys,TT_Task,DT_FixedDrtn,TK_NotStart,CZA-TK-3202-1640,Welding,8388,3838.833333,0,10,0,20.921585,20.921585,10,30,0,30,,,,2015-05-28 13:50,2015-05-30 13:50,,2014-03-06 15:00,2014-03-08 15:00,2014-03-06 15:00,2014-03-08 15:00,2014-03-06 15:00,2014-03-08 15:00,2015-05-28 13:50,2015-05-30 13:50,,PT_Normal,,,,,83PvMGgQmE+FtBk9HOBPmg,3/VwpHqByk2ZOBrL92eM/Q,,,N,0,0,,,2014-04-13 07:21,2014-04-15 07:43,admin,admin,
2615,142712,6971,40189,7842,0,N,N,N,CP_Phys,TT_Task,DT_FixedDrtn,TK_NotStart,CZA-TK-3202-1650,Inspection,8388,3838.833333,0,20,0,4.184317,4.184317,20,0,0,0,,,,2015-05-27 13:50,2015-05-30 13:50,,2014-03-05 15:00,2014-03-08 15:00,2014-03-05 15:00,2014-03-08 15:00,2014-03-05 15:00,2014-03-08 15:00,2015-05-27 13:50,2015-05-30 13:50,,PT_Normal,,,,,ttVzgjNW5EKZOiO5b4nbmA,qN88I5i/NkyJySoi2tX15w,,,N,0,0,,,2014-04-13 07:21,2014-04-15 07:43,admin,admin,
2616,142713,6971,40299,7842,0,N,N,N,CP_Phys,TT_Task,DT_FixedDrtn,TK_NotStart,CZA-TK-3202-1660,"Cutting, Installation and Fit-up",8388,3838.833333,0,10,0,0,0,10,10,0,10,,,,2015-05-27 13:50,2015-05-28 13:50,,2014-03-05 15:00,2014-03-06 15:00,2014-03-05 15:00,2014-03-06 15:00,2014-03-05 15:00,2014-03-06 15:00,2015-05-27 13:50,2015-05-28 13:50,,PT_Normal,,,,,y2e6RjFza0u8dGxr42pGYw,amaxmUXF90CH+jgQSV1Mpg,,,N,0,0,,,2014-04-13 07:21,2014-04-15 07:43,admin,admin,
2617,142714,6971,40299,7842,0,N,N,N,CP_Phys,TT_Task,DT_FixedDrtn,TK_NotStart,CZA-TK-3202-1670,Welding,8388,3838.833333,0,10,0,0,0,10,30,0,30,,,,2015-05-28 13:50,2015-05-30 13:50,,2014-03-06 15:00,2014-03-08 15:00,2014-03-06 15:00,2014-03-08 15:00,2014-03-06 15:00,2014-03-08 15:00,2015-05-28 13:50,2015-05-30 13:50,,PT_Normal,,,,,TdwNNR7wGka4ds0qe/huVg,gC6nTm5RPU61XKTKt6Fx8w,,,N,0,0,,,2014-04-13 07:21,2014-04-15 07:43,admin,admin,
2618,142715,6971,40299,7842,0,N,N,N,CP_Phys,TT_Task,DT_FixedDrtn,TK_NotStart,CZA-TK-3202-1680,Inspection,8388,3838.833333,0,20,0,0,0,20,0,0,0,,,,2015-05-27 13:50,2015-05-30 13:50,,2014-03-05 15:00,2014-03-08 15:00,2014-03-05 15:00,2014-03-08 15:00,2014-03-05 15:00,2014-03-08 15:00,2015-05-27 13:50,2015-05-30 13:50,,PT_Normal,,,,,PpVmcwXRoU2a6XK7OYnuXw,Uz0lsHGMRESxRv95KJPQuQ,,,N,0,0,,,2014-04-13 07:21,2014-04-15 07:43,admin,admin,
2619,142716,6971,40300,7842,0,N,N,N,CP_Phys,TT_Task,DT_FixedDrtn,TK_NotStart,CZA-TK-3202-1690,"Cutting, Installation and Fit-up",8388,3838.833333,0,10,0,0,0,10,20,0,20,,,,2015-05-27 13:50,2015-05-28 13:50,,2014-03-05 15:00,2014-03-06 15:00,2014-03-05 15:00,2014-03-06 15:00,2014-03-05 15:00,2014-03-06 15:00,2015-05-27 13:50,2015-05-28 13:50,,PT_Normal,,,,,neYmkPIvVke0Pm+9cZ+J6w,iBMU5a2BJ0aB1wiIXUj11Q,,,N,0,0,,,2014-04-13 07:21,2014-04-15 07:43,admin,admin,
2620,142717,6971,40300,7842,0,N,N,N,CP_Phys,TT_Task,DT_FixedDrtn,TK_NotStart,CZA-TK-3202-1700,Welding,8388,3838.833333,0,10,0,0,0,10,30,0,30,,,,2015-05-28 13:50,2015-05-30 13:50,,2014-03-06 15:00,2014-03-08 15:00,2014-03-06 15:00,2014-03-08 15:00,2014-03-06 15:00,2014-03-08 15:00,2015-05-28 13:50,2015-05-30 13:50,,PT_Normal,,,,,FHlp5Ug0WUa70ud46mZeoA,zuopx/If2USAhbvKN6dq+A,,,N,0,0,,,2014-04-13 07:21,2014-04-15 07:43,admin,admin,
2621,142718,6971,40300,7842,0,N,N,N,CP_Phys,TT_Task,DT_FixedDrtn,TK_NotStart,CZA-TK-3202-1710,Inspection,8388,3838.833333,0,20,0,0,0,20,0,0,0,,,,2015-05-27 13:50,2015-05-30 13:50,,2014-03-05 15:00,2014-03-08 15:00,2014-03-05 15:00,2014-03-08 15:00,2014-03-05 15:00,2014-03-08 15:00,2015-05-27 13:50,2015-05-30 13:50,,PT_Normal,,,,,4tXyjqHcuE2k7oXimeXkQg,Z0VgQ2TvsEakGHQP1dmQGA,,,N,0,0,,,2014-04-13 07:21,2014-04-15 07:43,admin,admin,
2622,142719,6971,40301,7842,0,N,N,N,CP_Phys,TT_Task,DT_FixedDrtn,TK_NotStart,CZA-TK-3202-1720,Laying and Fit-up,8388,3838.833333,0,10,0,1.38385,1.38385,10,0,0,0,,,,2015-05-30 13:50,2015-05-31 13:50,,2014-03-08 15:00,2014-03-09 15:00,2014-03-08 15:00,2014-03-09 15:00,2014-03-08 15:00,2014-03-09 15:00,2015-05-30 13:50,2015-05-31 13:50,,PT_Normal,,,,,imExKmd/gU21vTBrg+FLwg,8J1A6VdJb0O6E/Rr/cFlRA,,,N,0,0,,,2014-04-13 07:21,2014-04-15 07:43,admin,admin,
2623,142720,6971,40301,7842,0,N,N,N,CP_Phys,TT_Task,DT_FixedDrtn,TK_NotStart,CZA-TK-3202-1730,Welding,8388,3838.833333,0,10,0,1.729812,1.729812,10,0,0,0,,,,2015-05-31 13:50,2015-06-01 13:50,,2014-03-09 15:00,2014-03-10 15:00,2014-03-09 15:00,2014-03-10 15:00,2014-03-09 15:00,2014-03-10 15:00,2015-05-31 13:50,2015-06-01 13:50,,PT_Normal,,,,,KC7WatnvuEKfXd/QWXouBA,rNldGnWlb0qkYV+1cDGnQA,,,N,0,0,,,2014-04-13 07:21,2014-04-15 07:43,admin,admin,
2624,142721,6971,40301,7842,0,N,N,N,CP_Phys,TT_Task,DT_FixedDrtn,TK_NotStart,CZA-TK-3202-1740,Inspection,8388,3838.833333,0,20,0,0.345962,0.345962,20,0,0,0,,,,2015-05-30 13:50,2015-06-01 13:50,,2014-03-08 15:00,2014-03-10 15:00,2014-03-08 15:00,2014-03-10 15:00,2014-03-08 15:00,2014-03-10 15:00,2015-05-30 13:50,2015-06-01 13:50,,PT_Normal,,,,,PEBt14AbIkS+jOpaAT79Dg,RmEfGIZe9kCep+/JsM5Jvg,,,N,0,0,,,2014-04-13 07:21,2014-04-15 07:43,admin,admin,
2625,142722,6971,40302,7842,0,N,N,N,CP_Phys,TT_Task,DT_FixedDrtn,TK_NotStart,CZA-TK-3202-1810,Erection and Fit-up,8388,3838.833333,0,20,0,0,0,20,40,0,40,,,,2015-06-04 15:00,2015-06-07 15:00,,2014-03-13 16:10,2014-03-16 16:10,2014-03-13 16:10,2014-03-16 16:10,2014-03-13 16:10,2014-03-16 16:10,2015-06-04 15:00,2015-06-07 15:00,,PT_Normal,,,,,gomIyW9X3Ey1PwIkrvbBzw,jusSrkKCL0uPyrCINrO/iQ,,,N,0,0,,,2014-04-13 07:21,2014-04-15 07:43,admin,admin,
2626,142723,6971,40302,7842,0,N,N,N,CP_Phys,TT_Task,DT_FixedDrtn,TK_NotStart,CZA-TK-3202-1820,Welding,8388,3838.833333,0,30,0,0,0,30,0,0,0,,,,2015-06-07 15:00,2015-06-10 15:00,,2014-03-16 16:10,2014-03-19 16:10,2014-03-16 16:10,2014-03-19 16:10,2014-03-16 16:10,2014-03-19 16:10,2015-06-07 15:00,2015-06-10 15:00,,PT_Normal,,,,,mHTfMuEvx0mLmj4XFGuoNA,sqIa5aZRVUS8IKgH3Guaew,,,N,0,0,,,2014-04-13 07:21,2014-04-15 07:43,admin,admin,
2627,142724,6971,40302,7842,0,N,N,N,CP_Phys,TT_Task,DT_FixedDrtn,TK_NotStart,CZA-TK-3202-1830,Inspection,8388,3838.833333,0,50,0,0,0,50,0,0,0,,,,2015-06-04 15:00,2015-06-10 15:00,,2014-03-13 16:10,2014-03-19 16:10,2014-03-13 16:10,2014-03-19 16:10,2014-03-13 16:10,2014-03-19 16:10,2015-06-04 15:00,2015-06-10 15:00,,PT_Normal,,,,,lL+5496XkkS/W37jDMbMwg,aXvVd4fXeEeh3esgYtErnQ,,,N,0,0,,,2014-04-13 07:21,2014-04-15 07:43,admin,admin,
2628,142725,6971,39986,7842,0,N,N,N,CP_Phys,TT_Task,DT_FixedDrtn,TK_NotStart,CZA-TK-2400-1530,Tank Calibration,8384,3636,0,50,0,54.831292,54.831292,50,0,0,0,,,,2015-06-20 15:00,2015-06-25 15:00,,2014-04-22 09:00,2014-04-28 09:00,2014-04-22 09:00,2014-04-28 09:00,2014-04-22 09:00,2014-04-28 09:00,2015-06-20 15:00,2015-06-25 15:00,,PT_Normal,,,,,BZk7IfG6hUW2bZE3nePtdQ,,,,N,0,0,,,2014-04-13 07:21,2014-04-14 16:04,admin,admin,
2629,142726,6971,39986,7842,0,N,N,N,CP_Phys,TT_Task,DT_FixedDrtn,TK_NotStart,CZA-TK-2400-1540,Tank Handover,8384,3636,2124,20,0,54.831292,54.831292,20,0,0,0,,,,2015-06-25 15:00,2015-06-28 15:00,,2014-04-28 09:00,2014-04-30 09:00,2014-04-28 09:00,2014-04-30 09:00,2014-04-28 09:00,2014-04-30 09:00,2015-06-25 15:00,2015-06-28 15:00,,PT_Normal,,,,,cq+0KIgmoUO8oh5Qjunwyg,,,,N,0,0,,,2014-04-13 07:21,2014-04-14 16:04,admin,admin,
2630,142727,6971,39987,7842,0,N,N,N,CP_Phys,TT_Task,DT_FixedDrtn,TK_NotStart,CZA-TK-2400-1510,"Filling, Holding and Transfer of Water",8384,3596,0,40,0,274.156458,274.156458,40,0,0,0,,,,2015-06-04 15:00,2015-06-09 15:00,,2014-04-12 09:00,2014-04-16 09:00,2014-04-12 09:00,2014-04-16 09:00,2014-04-12 09:00,2014-04-16 09:00,2015-06-04 15:00,2015-06-09 15:00,,PT_Normal,,,,,Mn1udjiIcEWeJIzu3xjlMQ,,,,N,0,0,,,2014-04-13 07:21,2014-04-14 16:04,admin,admin,
2631,142728,6971,39988,7842,0,N,N,N,CP_Phys,TT_Task,DT_FixedDrtn,TK_NotStart,CZA-TK-2400-1000,Cutting of Bottom Plates,8489,2906,0,10,0,1,1,10,0,0,0,,,,2014-11-18 13:00,2014-11-19 13:00,,2013-12-15 07:00,2013-12-15 17:00,2013-12-15 07:00,2013-12-15 17:00,2013-12-15 07:00,2013-12-15 17:00,2014-11-18 13:00,2014-11-19 13:00,,PT_Normal,,,,,ck6xGDFq9EOiiwIRmje2Eg,,,,N,0,0,,,2014-04-13 07:21,2014-04-14 16:36,admin,admin,
2632,142729,6971,39988,7842,0,N,N,N,CP_Phys,TT_Task,DT_FixedDrtn,TK_NotStart,CZA-TK-2400-1010,"Cutting, Bevelling and Rolling Shell No.1",8489,4324,0,10,0,1,1,10,0,0,0,,,,2015-05-03 11:00,2015-05-04 11:00,,2013-12-15 07:00,2013-12-15 17:00,2013-12-15 07:00,2013-12-15 17:00,2013-12-15 07:00,2013-12-15 17:00,2015-05-03 11:00,2015-05-04 11:00,,PT_Normal,,,,,LEosD6qSb0Gf1Piic3hieA,,,,N,0,0,,,2014-04-13 07:21,2014-04-14 16:36,admin,admin,
2633,142730,6971,39988,7842,0,N,N,N,CP_Phys,TT_Task,DT_FixedDrtn,TK_NotStart,CZA-TK-2400-1020,"Cutting, Bevelling & Rolling Shell No.2",8489,4324,0,10,0,1,1,10,0,0,0,,,,2015-05-03 11:00,2015-05-04 11:00,,2013-12-15 07:00,2013-12-15 17:00,2013-12-15 07:00,2013-12-15 17:00,2013-12-15 07:00,2013-12-15 17:00,2015-05-03 11:00,2015-05-04 11:00,,PT_Normal,,,,,+vYeB4uB5EWxJ79j4YFZXw,,,,N,0,0,,,2014-04-13 07:21,2014-04-14 16:36,admin,admin,
2634,142731,6971,39988,7842,0,N,N,N,CP_Phys,TT_Task,DT_FixedDrtn,TK_NotStart,CZA-TK-2400-1030,"Cutting, Fit-up and Welding of Shell Nozzles. Manholes and Othe Appurtanances",8489,4324,0,40,0,4,4,40,0,0,0,,,,2015-05-04 11:00,2015-05-09 11:00,,2013-12-16 07:00,2013-12-19 17:00,2013-12-16 07:00,2013-12-19 17:00,2013-12-16 07:00,2013-12-19 17:00,2015-05-04 11:00,2015-05-09 11:00,,PT_Normal,,,,,kICtKhsaakOgxrR4JwQGHA,,,,N,0,0,,,2014-04-13 07:21,2014-04-14 16:36,admin,admin,
2635,142732,6971,39988,7842,0,N,N,N,CP_Phys,TT_Task,DT_FixedDrtn,TK_NotStart,CZA-TK-2400-1040,"Cutting, Bevelling & Rolling Shell No.3",8489,4324,0,10,0,1,1,10,0,0,0,,,,2015-05-09 11:00,2015-05-10 11:00,,2013-12-21 07:00,2013-12-21 17:00,2013-12-21 07:00,2013-12-21 17:00,2013-12-21 07:00,2013-12-21 17:00,2015-05-09 11:00,2015-05-10 11:00,,PT_Normal,,,,,cDM94R754E6IxTvkrLn1bw,,,,N,0,0,,,2014-04-13 07:21,2014-04-14 16:36,admin,admin,
2636,142733,6971,39988,7842,0,N,N,N,CP_Phys,TT_Task,DT_FixedDrtn,TK_NotStart,CZA-TK-2400-1050,"Cutting, Bevelling & Rolling Shell No.4",8489,4324,0,10,0,1,1,10,0,0,0,,,,2015-05-09 11:00,2015-05-10 11:00,,2013-12-21 07:00,2013-12-21 17:00,2013-12-21 07:00,2013-12-21 17:00,2013-12-21 07:00,2013-12-21 17:00,2015-05-09 11:00,2015-05-10 11:00,,PT_Normal,,,,,V4z7QnwIgkaak//Q34FZVw,,,,N,0,0,,,2014-04-13 07:21,2014-04-14 16:36,admin,admin,
2637,142734,6971,39988,7842,0,N,N,N,CP_Phys,TT_Task,DT_FixedDrtn,TK_NotStart,CZA-TK-2400-1060,"Cutting, Bevelling and Rolling of Curb Angle",8489,4324,0,30,0,3,3,30,0,0,0,,,,2015-05-12 07:00,2015-05-14 17:00,,2013-12-23 13:00,2013-12-26 13:00,2013-12-23 13:00,2013-12-26 13:00,2013-12-23 13:00,2013-12-26 13:00,2015-05-12 07:00,2015-05-14 17:00,,PT_Normal,,,,,lrzDcliw2Eyw9JXK4j+cyg,,,,N,0,0,,,2014-04-13 07:21,2014-04-14 16:36,admin,admin,
2638,142735,6971,39988,7842,0,N,N,N,CP_Phys,TT_Task,DT_FixedDrtn,TK_NotStart,CZA-TK-2400-1070,"Cutting, Fit-up and Welding of Roof Structure",8489,4324,0,50,0,5,5,50,0,0,0,,,,2015-05-12 07:00,2015-05-17 17:00,,2013-12-23 13:00,2013-12-29 13:00,2013-12-23 13:00,2013-12-29 13:00,2013-12-23 13:00,2013-12-29 13:00,2015-05-12 07:00,2015-05-17 17:00,,PT_Normal,,,,,EiffTorsSkeSWszgdGYmnw,,,,N,0,0,,,2014-04-13 07:21,2014-04-14 16:36,admin,admin,
2639,142736,6971,39988,7842,0,N,N,N,CP_Phys,TT_Task,DT_FixedDrtn,TK_NotStart,CZA-TK-2400-1080,Cutting of Roof Plates,8489,4324,0,10,0,1,1,10,0,0,0,,,,2015-05-18 07:00,2015-05-18 17:00,,2013-12-29 13:00,2013-12-30 13:00,2013-12-29 13:00,2013-12-30 13:00,2013-12-29 13:00,2013-12-30 13:00,2015-05-18 07:00,2015-05-18 17:00,,PT_Normal,,,,,d5SDds3dEk6hCsQYeICtng,,,,N,0,0,,,2014-04-13 07:21,2014-04-14 16:36,admin,admin,
2640,142737,6971,39988,7842,0,N,N,N,CP_Phys,TT_Task,DT_FixedDrtn,TK_NotStart,CZA-TK-2400-1090,"Cutting, Fit-up and Welding of Roof Structure, Gratings and Handrails",8489,4324,0,70,0,7,7,70,0,0,0,,,,2015-05-19 07:00,2015-05-26 17:00,,2013-12-30 13:00,2014-01-07 13:00,2013-12-30 13:00,2014-01-07 13:00,2013-12-30 13:00,2014-01-07 13:00,2015-05-19 07:00,2015-05-26 17:00,,PT_Normal,,,,,20yLDqJOKE+7mRGbwP/HaA,,,,N,0,0,,,2014-04-13 07:21,2014-04-14 16:36,admin,admin,
2641,142738,6971,39988,7842,0,N,N,N,CP_Phys,TT_Task,DT_FixedDrtn,TK_NotStart,CZA-TK-2400-1100,"Cutting,Fit-up and Welding of Roof Nozzles, Manholes and Other Appurtanances",8489,4324,728,40,0,4,4,40,0,0,0,,,,2015-05-20 13:00,2015-05-25 13:00,,2014-01-01 09:00,2014-01-06 09:00,2014-01-01 09:00,2014-01-06 09:00,2014-01-01 09:00,2014-01-06 09:00,2015-05-20 13:00,2015-05-25 13:00,,PT_Normal,,,,,zCZdOmXmhECkyI5SQrG0/A,,,,N,0,0,,,2014-04-13 07:21,2014-04-14 16:36,admin,admin,
2642,142739,6971,40098,7842,0,N,N,N,CP_Phys,TT_Mile,DT_FixedDrtn,TK_NotStart,CZA-TK-2400-1110,Foundation Takeover From Client,,0,0,0,0,0,0,0,0,0,0,2014-03-10 00:00,,,2014-03-09 17:00,2014-03-09 17:00,,2014-03-10 07:00,2014-03-10 07:00,2014-03-10 07:00,2014-03-10 07:00,2014-03-10 07:00,2014-03-10 07:00,2014-03-09 17:00,2014-03-09 17:00,CS_MSO,PT_Normal,,,,,/qWEkTuHrkCbSJCYe59n3w,,,,N,0,0,,,2014-04-13 07:21,2014-04-13 07:42,admin,admin,
2643,142740,6971,39990,7842,0,N,N,N,CP_Phys,TT_Task,DT_FixedDrtn,TK_NotStart,CZA-TK-2400-1520,"Blasting and Painting of Bottom, Shell and Roof (Inside and Outside)",8384,3636,0,50,0,164.493875,164.493875,50,0,0,0,,,,2015-06-14 15:00,2015-06-20 15:00,,2014-04-16 09:00,2014-04-22 09:00,2014-04-16 09:00,2014-04-22 09:00,2014-04-16 09:00,2014-04-22 09:00,2015-06-14 15:00,2015-06-20 15:00,,PT_Normal,,,,,9wGIjeHMVUiRfDvJAl23Bw,,,,N,0,0,,,2014-04-13 07:21,2014-04-14 16:04,admin,admin,
2644,142741,6971,40201,7842,0,N,N,N,CP_Phys,TT_Task,DT_FixedDrtn,TK_NotStart,CZA-TK-2400-1120,Erection and Fit-up,8384,3596,0,10,0,31.21483,31.21483,10,0,0,0,,,,2015-05-03 13:00,2015-05-04 13:00,,2014-03-10 07:00,2014-03-10 17:00,2014-03-10 07:00,2014-03-10 17:00,2014-03-10 07:00,2014-03-10 17:00,2015-05-03 13:00,2015-05-04 13:00,,PT_Normal,,,,,/ZC9l3roZES0vQC3lIVEIQ,q7RfwT5gj0+bXOv0QjWgPw,,,N,0,0,,,2014-04-13 07:21,2014-04-14 16:04,admin,admin,
2645,142742,6971,40201,7842,0,N,N,N,CP_Phys,TT_Task,DT_FixedDrtn,TK_NotStart,CZA-TK-2400-1130,Welding,8384,3596,0,10,0,39.018538,39.018538,10,20,0,20,,,,2015-05-04 13:00,2015-05-05 13:00,,2014-03-11 07:00,2014-03-11 17:00,2014-03-11 07:00,2014-03-11 17:00,2014-03-11 07:00,2014-03-11 17:00,2015-05-04 13:00,2015-05-05 13:00,,PT_Normal,,,,,KXzd45YRNEWhem5sZmR5kA,1PKmJY62FkK4Sk+s0nSOIA,,,N,0,0,,,2014-04-13 07:21,2014-04-14 16:04,admin,admin,
2646,142743,6971,40201,7842,0,N,N,N,CP_Phys,TT_Task,DT_FixedDrtn,TK_NotStart,CZA-TK-2400-1140,Inspection,8384,3596,0,20,0,7.803708,7.803708,20,0,0,0,,,,2015-05-03 13:00,2015-05-05 13:00,,2014-03-10 07:00,2014-03-11 17:00,2014-03-10 07:00,2014-03-11 17:00,2014-03-10 07:00,2014-03-11 17:00,2015-05-03 13:00,2015-05-05 13:00,,PT_Normal,,,,,WCguF5/GJE+NHIm+s/KBgw,i3kVVkgssE60CyweqM/fjQ,,,N,0,0,,,2014-04-13 07:21,2014-04-14 16:04,admin,admin,
2647,142744,6971,40411,7842,0,N,N,N,CP_Phys,TT_Task,DT_FixedDrtn,TK_NotStart,CZA-TK-2400-1150,Erection and Fit-up,8384,3596,0,10,0,31.510591,31.510591,10,20,0,20,,,,2015-05-05 13:00,2015-05-06 13:00,,2014-03-12 07:00,2014-03-12 17:00,2014-03-12 07:00,2014-03-12 17:00,2014-03-12 07:00,2014-03-12 17:00,2015-05-05 13:00,2015-05-06 13:00,,PT_Normal,,,,,h3pIjfC4ykW12JrY6ZLa9A,NEEiURzJI0CFEUyx6dxh6A,,,N,0,0,,,2014-04-13 07:21,2014-04-14 16:04,admin,admin,
2648,142745,6971,40411,7842,0,N,N,N,CP_Phys,TT_Task,DT_FixedDrtn,TK_NotStart,CZA-TK-2400-1160,Welding,8384,3596,0,10,0,39.388239,39.388239,10,0,0,0,,,,2015-05-06 13:00,2015-05-07 13:00,,2014-03-13 07:00,2014-03-13 17:00,2014-03-13 07:00,2014-03-13 17:00,2014-03-13 07:00,2014-03-13 17:00,2015-05-06 13:00,2015-05-07 13:00,,PT_Normal,,,,,0P9iww29M0GAxwdayHhVoQ,z5y9eV53sUCMdYSrzXL80Q,,,N,0,0,,,2014-04-13 07:21,2014-04-14 16:04,admin,admin,
2649,142746,6971,40411,7842,0,N,N,N,CP_Phys,TT_Task,DT_FixedDrtn,TK_NotStart,CZA-TK-2400-1170,Inspection,8384,3596,0,20,0,7.877648,7.877648,20,40,0,40,,,,2015-05-05 13:00,2015-05-07 13:00,,2014-03-12 07:00,2014-03-13 17:00,2014-03-12 07:00,2014-03-13 17:00,2014-03-12 07:00,2014-03-13 17:00,2015-05-05 13:00,2015-05-07 13:00,,PT_Normal,,,,,R7+rkP3+9kCYBWkbkFPtrQ,8yU61xoZ90usS8LAsZK7ow,,,N,0,0,,,2014-04-13 07:21,2014-04-14 16:04,admin,admin,
2650,142747,6971,40412,7842,0,N,N,N,CP_Phys,TT_Task,DT_FixedDrtn,TK_NotStart,CZA-TK-2400-1240,Erection and Fit-up,8384,3596,0,10,0,50.515708,50.515708,10,0,0,0,,,,2015-05-13 13:00,2015-05-14 13:00,,2014-03-20 07:00,2014-03-20 17:00,2014-03-20 07:00,2014-03-20 17:00,2014-03-20 07:00,2014-03-20 17:00,2015-05-13 13:00,2015-05-14 13:00,,PT_Normal,,,,,cFIaQEDIFEO+wEYY5929Ng,OyYqmoNg3kCd/8AHOdH+cw,,,N,0,0,,,2014-04-13 07:21,2014-04-14 16:04,admin,admin,
2651,142748,6971,40412,7842,0,N,N,N,CP_Phys,TT_Task,DT_FixedDrtn,TK_NotStart,CZA-TK-2400-1250,Welding,8384,3596,0,10,0,63.144635,63.144635,10,0,0,0,,,,2015-05-14 13:00,2015-05-16 13:00,,2014-03-22 07:00,2014-03-22 17:00,2014-03-22 07:00,2014-03-22 17:00,2014-03-22 07:00,2014-03-22 17:00,2015-05-14 13:00,2015-05-16 13:00,,PT_Normal,,,,,ch20+j4+v0Gh+EFRGBUcwA,c5+O/Cg18U+uY0jLxWo4Sg,,,N,0,0,,,2014-04-13 07:21,2014-04-14 16:04,admin,admin,
2652,142749,6971,40412,7842,0,N,N,N,CP_Phys,TT_Task,DT_FixedDrtn,TK_NotStart,CZA-TK-2400-1260,Inspection,8384,3596,0,20,0,12.628927,12.628927,20,0,0,0,,,,2015-05-13 13:00,2015-05-16 13:00,,2014-03-20 07:00,2014-03-22 17:00,2014-03-20 07:00,2014-03-22 17:00,2014-03-20 07:00,2014-03-22 17:00,2015-05-13 13:00,2015-05-16 13:00,,PT_Normal,,,,,bIR34KxBh0ioWpks23hSPw,wEgU1yksi0GIsFsZWIWpMA,,,N,0,0,,,2014-04-13 07:21,2014-04-14 16:04,admin,admin,
2653,142750,6971,40413,7842,0,N,N,N,CP_Phys,TT_Task,DT_FixedDrtn,TK_NotStart,CZA-TK-2400-1420,Installation and Fit-up,8384,3596,0,20,0,5.874894,5.874894,20,40,0,40,,,,2015-05-25 13:00,2015-05-27 13:00,,2014-04-01 07:00,2014-04-02 17:00,2014-04-01 07:00,2014-04-02 17:00,2014-04-01 07:00,2014-04-02 17:00,2015-05-25 13:00,2015-05-27 13:00,,PT_Normal,,,,,N16xVQCwm0uZ+5MeDWX/8A,bD2aSVsRPUGwVgEu44Yb3g,,,N,0,0,,,2014-04-13 07:21,2014-04-14 16:04,admin,admin,
2654,142751,6971,40413,7842,0,N,N,N,CP_Phys,TT_Task,DT_FixedDrtn,TK_NotStart,CZA-TK-2400-1430,Welding,8384,3596,0,30,0,7.343617,7.343617,30,60,0,60,,,,2015-05-27 13:00,2015-05-31 13:00,,2014-04-03 07:00,2014-04-06 17:00,2014-04-03 07:00,2014-04-06 17:00,2014-04-03 07:00,2014-04-06 17:00,2015-05-27 13:00,2015-05-31 13:00,,PT_Normal,,,,,FDbUiA21JkWFZoeRlFYWOA,GxHnLl5VIkuOEAgeAd9eOA,,,N,0,0,,,2014-04-13 07:21,2014-04-14 16:04,admin,admin,
2655,142752,6971,40413,7842,0,N,N,N,CP_Phys,TT_Task,DT_FixedDrtn,TK_NotStart,CZA-TK-2400-1440,Inspection,8384,3596,0,50,0,1.468723,1.468723,50,0,0,0,,,,2015-05-25 13:00,2015-05-31 13:00,,2014-04-01 07:00,2014-04-06 17:00,2014-04-01 07:00,2014-04-06 17:00,2014-04-01 07:00,2014-04-06 17:00,2015-05-25 13:00,2015-05-31 13:00,,PT_Normal,,,,,g1Cdgp+Oz0qzwLz+JggxVw,M+mAsAseME6UwHJ2LqieAg,,,N,0,0,,,2014-04-13 07:21,2014-04-14 16:04,admin,admin,
2656,142753,6971,40414,7842,0,N,N,N,CP_Phys,TT_Task,DT_FixedDrtn,TK_NotStart,CZA-TK-2400-1480,Erection and Fit-up,8384,3596,0,20,0,0,0,20,0,0,0,,,,2015-05-28 15:00,2015-05-31 15:00,,2014-04-05 09:00,2014-04-07 09:00,2014-04-05 09:00,2014-04-07 09:00,2014-04-05 09:00,2014-04-07 09:00,2015-05-28 15:00,2015-05-31 15:00,,PT_Normal,,,,,lQQhCMo8tkW4TreupzMdmA,xISvkONOLUeuW4e6JAtS5g,,,N,0,0,,,2014-04-13 07:21,2014-04-14 16:04,admin,admin,
2657,142754,6971,40414,7842,0,N,N,N,CP_Phys,TT_Task,DT_FixedDrtn,TK_NotStart,CZA-TK-2400-1490,Welding,8384,3596,0,40,0,0,0,40,80,0,80,,,,2015-05-31 15:00,2015-06-04 15:00,,2014-04-07 09:00,2014-04-12 09:00,2014-04-07 09:00,2014-04-12 09:00,2014-04-07 09:00,2014-04-12 09:00,2015-05-31 15:00,2015-06-04 15:00,,PT_Normal,,,,,HMnsxPtqzEyAsdGtF19Tzg,FHRY9Pkt6keAe1jb8Uv9Iw,,,N,0,0,,,2014-04-13 07:21,2014-04-14 16:04,admin,admin,
2658,142755,6971,40414,7842,0,N,N,N,CP_Phys,TT_Task,DT_FixedDrtn,TK_NotStart,CZA-TK-2400-1500,Inspection,8384,3596,0,60,0,0,0,60,0,0,0,,,,2015-05-28 15:00,2015-06-04 15:00,,2014-04-05 09:00,2014-04-12 09:00,2014-04-05 09:00,2014-04-12 09:00,2014-04-05 09:00,2014-04-12 09:00,2015-05-28 15:00,2015-06-04 15:00,,PT_Normal,,,,,F1MWOT4u7EmuAarOGkFtog,3A/uUzchU0qqxttIh1oVVg,,,N,0,0,,,2014-04-13 07:21,2014-04-14 16:04,admin,admin,
2659,142756,6971,40415,7842,0,N,N,N,CP_Phys,TT_Task,DT_FixedDrtn,TK_NotStart,CZA-TK-2400-1210,"Cutting, Installation and Fit-up",8384,3596,0,10,0,4.784178,4.784178,10,20,0,20,,,,2015-05-10 13:00,2015-05-11 13:00,,2014-03-17 07:00,2014-03-17 17:00,2014-03-17 07:00,2014-03-17 17:00,2014-03-17 07:00,2014-03-17 17:00,2015-05-10 13:00,2015-05-11 13:00,,PT_Normal,,,,,GrdrEGgJlEKOYTpH67J5gQ,xfWZSykn9US3GCleI+x61Q,,,N,0,0,,,2014-04-13 07:21,2014-04-14 16:04,admin,admin,
2660,142757,6971,40415,7842,0,N,N,N,CP_Phys,TT_Task,DT_FixedDrtn,TK_NotStart,CZA-TK-2400-1220,Welding,8384,3596,0,20,0,5.980222,5.980222,20,40,0,40,,,,2015-05-11 13:00,2015-05-13 13:00,,2014-03-18 07:00,2014-03-19 17:00,2014-03-18 07:00,2014-03-19 17:00,2014-03-18 07:00,2014-03-19 17:00,2015-05-11 13:00,2015-05-13 13:00,,PT_Normal,,,,,QnSslWrYO0arSyLdck+nag,F+Y8OJbxoUKYpnHXQKiR0Q,,,N,0,0,,,2014-04-13 07:21,2014-04-14 16:04,admin,admin,
2661,142758,6971,40415,7842,0,N,N,N,CP_Phys,TT_Task,DT_FixedDrtn,TK_NotStart,CZA-TK-2400-1230,Inspection,8384,3596,0,30,0,1.196044,1.196044,30,0,0,0,,,,2015-05-10 13:00,2015-05-13 13:00,,2014-03-17 07:00,2014-03-19 17:00,2014-03-17 07:00,2014-03-19 17:00,2014-03-17 07:00,2014-03-19 17:00,2015-05-10 13:00,2015-05-13 13:00,,PT_Normal,,,,,b+qt0Bt6uEyU9tQ5zLr3KQ,0zfzSYhqLUqZ0HE8w1+biA,,,N,0,0,,,2014-04-13 07:21,2014-04-14 16:04,admin,admin,
2662,142759,6971,40416,7842,0,N,N,N,CP_Phys,TT_Task,DT_FixedDrtn,TK_NotStart,CZA-TK-2400-1270,Erection and Fit-up,8384,3596,0,10,0,42.183978,42.183978,10,20,0,20,,,,2015-05-16 13:00,2015-05-17 13:00,,2014-03-23 07:00,2014-03-23 17:00,2014-03-23 07:00,2014-03-23 17:00,2014-03-23 07:00,2014-03-23 17:00,2015-05-16 13:00,2015-05-17 13:00,,PT_Normal,,,,,t74Hz1XuZ0CSpRslBNg94A,8r5M3o8SgEWes50CefLAQw,,,N,0,0,,,2014-04-13 07:21,2014-04-14 16:04,admin,admin,
2663,142760,6971,40416,7842,0,N,N,N,CP_Phys,TT_Task,DT_FixedDrtn,TK_NotStart,CZA-TK-2400-1280,Welding,8384,3596,0,10,0,52.729973,52.729973,10,20,0,20,,,,2015-05-17 13:00,2015-05-18 13:00,,2014-03-24 07:00,2014-03-24 17:00,2014-03-24 07:00,2014-03-24 17:00,2014-03-24 07:00,2014-03-24 17:00,2015-05-17 13:00,2015-05-18 13:00,,PT_Normal,,,,,rLyKaNk5s06nSuEXNAGq1Q,6lxKm5MuVUubbRaj10fOxQ,,,N,0,0,,,2014-04-13 07:21,2014-04-14 16:04,admin,admin,
2664,142761,6971,40416,7842,0,N,N,N,CP_Phys,TT_Task,DT_FixedDrtn,TK_NotStart,CZA-TK-2400-1290,Inspection,8384,3596,0,20,0,10.545995,10.545995,20,0,0,0,,,,2015-05-16 13:00,2015-05-18 13:00,,2014-03-23 07:00,2014-03-24 17:00,2014-03-23 07:00,2014-03-24 17:00,2014-03-23 07:00,2014-03-24 17:00,2015-05-16 13:00,2015-05-18 13:00,,PT_Normal,,,,,pQkls9O1JE2A1Qh6yIIw3A,XZexYUQK40m24xI/AXFP6g,,,N,0,0,,,2014-04-13 07:21,2014-04-14 16:04,admin,admin,
2665,142762,6971,40417,7842,0,N,N,N,CP_Phys,TT_Task,DT_FixedDrtn,TK_NotStart,CZA-TK-2400-1300,"Cutting, Installation and Fit-up",8384,3596,0,10,0,0,0,10,20,0,20,,,,2015-05-18 13:00,2015-05-19 13:00,,2014-03-25 07:00,2014-03-25 17:00,2014-03-25 07:00,2014-03-25 17:00,2014-03-25 07:00,2014-03-25 17:00,2015-05-18 13:00,2015-05-19 13:00,,PT_Normal,,,,,ZSfk9cgLGUqSLaWgc6H3+Q,7q99gx9bQkedYBiQ32ZKRw,,,N,0,0,,,2014-04-13 07:21,2014-04-14 16:04,admin,admin,
2666,142763,6971,40417,7842,0,N,N,N,CP_Phys,TT_Task,DT_FixedDrtn,TK_NotStart,CZA-TK-2400-1310,Welding,8384,3596,0,10,0,0,0,10,0,0,0,,,,2015-05-19 13:00,2015-05-20 13:00,,2014-03-26 07:00,2014-03-26 17:00,2014-03-26 07:00,2014-03-26 17:00,2014-03-26 07:00,2014-03-26 17:00,2015-05-19 13:00,2015-05-20 13:00,,PT_Normal,,,,,IO0Sybrpak680m2mhS1Mvg,w2Rp5z2q6kmvl7ZfKfB6Lw,,,N,0,0,,,2014-04-13 07:21,2014-04-14 16:04,admin,admin,
2667,142764,6971,40417,7842,0,N,N,N,CP_Phys,TT_Task,DT_FixedDrtn,TK_NotStart,CZA-TK-2400-1320,Inspection,8384,3596,0,20,0,0,0,20,0,0,0,,,,2015-05-18 13:00,2015-05-20 13:00,,2014-03-25 07:00,2014-03-26 17:00,2014-03-25 07:00,2014-03-26 17:00,2014-03-25 07:00,2014-03-26 17:00,2015-05-18 13:00,2015-05-20 13:00,,PT_Normal,,,,,HIIfVw93zUesQRpPm0a0Fg,WOlW76z3mUq2ZTH1+reU/Q,,,N,0,0,,,2014-04-13 07:21,2014-04-14 16:04,admin,admin,
2668,142765,6971,40250,7842,0,N,N,N,CP_Phys,TT_Task,DT_FixedDrtn,TK_NotStart,CZA-TK-2400-1390,Laying and Fit-up,8384,3596,0,10,0,30.725748,30.725748,10,20,0,20,,,,2015-05-23 13:00,2015-05-24 13:00,,2014-03-30 07:00,2014-03-30 17:00,2014-03-30 07:00,2014-03-30 17:00,2014-03-30 07:00,2014-03-30 17:00,2015-05-23 13:00,2015-05-24 13:00,,PT_Normal,,,,,ZV5ZtumwrkGtBNSLwXliKw,lqoLLr7/5kygFnKu35ZK/A,,,N,0,0,,,2014-04-13 07:21,2014-04-14 16:04,admin,admin,
2669,142766,6971,40250,7842,0,N,N,N,CP_Phys,TT_Task,DT_FixedDrtn,TK_NotStart,CZA-TK-2400-1400,Welding,8384,3596,0,10,0,38.407186,38.407186,10,20,0,20,,,,2015-05-24 13:00,2015-05-25 13:00,,2014-03-31 07:00,2014-03-31 17:00,2014-03-31 07:00,2014-03-31 17:00,2014-03-31 07:00,2014-03-31 17:00,2015-05-24 13:00,2015-05-25 13:00,,PT_Normal,,,,,07qNACckS0quBBNbfTG5lg,b1nZsMlO1kWoeCCjltwXCA,,,N,0,0,,,2014-04-13 07:21,2014-04-14 16:04,admin,admin,
2670,142767,6971,40250,7842,0,N,N,N,CP_Phys,TT_Task,DT_FixedDrtn,TK_NotStart,CZA-TK-2400-1410,Inspection,8384,3596,0,20,0,7.681437,7.681437,20,0,0,0,,,,2015-05-23 13:00,2015-05-25 13:00,,2014-03-30 07:00,2014-03-31 17:00,2014-03-30 07:00,2014-03-31 17:00,2014-03-30 07:00,2014-03-31 17:00,2015-05-23 13:00,2015-05-25 13:00,,PT_Normal,,,,,D6V9SBYy7UC4Q4wIjDbfYA,ZJLvsA/nKk2A1bYBYtNjEg,,,N,0,0,,,2014-04-13 07:21,2014-04-14 16:04,admin,admin,
2671,142768,6971,40419,7842,0,N,N,N,CP_Phys,TT_Task,DT_FixedDrtn,TK_NotStart,CZA-TK-2400-1330,Erection and Fit-up,8384,3596,0,10,0,1.063793,1.063793,10,0,0,0,,,,2015-05-20 13:00,2015-05-21 13:00,,2014-03-27 07:00,2014-03-27 17:00,2014-03-27 07:00,2014-03-27 17:00,2014-03-27 07:00,2014-03-27 17:00,2015-05-20 13:00,2015-05-21 13:00,,PT_Normal,,,,,DeTrmacTb0yzGZuVpZ2pBw,38rDDPsbtU6lg7401KsAhA,,,N,0,0,,,2014-04-13 07:21,2014-04-14 16:04,admin,admin,
2672,142769,6971,40419,7842,0,N,N,N,CP_Phys,TT_Task,DT_FixedDrtn,TK_NotStart,CZA-TK-2400-1340,Welding,8384,3596,0,10,0,1.329741,1.329741,10,20,0,20,,,,2015-05-21 13:00,2015-05-23 13:00,,2014-03-29 07:00,2014-03-29 17:00,2014-03-29 07:00,2014-03-29 17:00,2014-03-29 07:00,2014-03-29 17:00,2015-05-21 13:00,2015-05-23 13:00,,PT_Normal,,,,,TBOY8zcrJEq9uc4MUQQDpQ,KI89ugmbZEK0feP4KzqiJQ,,,N,0,0,,,2014-04-13 07:21,2014-04-14 16:04,admin,admin,
2673,142770,6971,40419,7842,0,N,N,N,CP_Phys,TT_Task,DT_FixedDrtn,TK_NotStart,CZA-TK-2400-1350,Inspection,8384,3596,0,20,0,0.265948,0.265948,20,0,0,0,,,,2015-05-20 13:00,2015-05-23 13:00,,2014-03-27 07:00,2014-03-29 17:00,2014-03-27 07:00,2014-03-29 17:00,2014-03-27 07:00,2014-03-29 17:00,2015-05-20 13:00,2015-05-23 13:00,,PT_Normal,,,,,FzshxzeezkqzvNBlMWLXhw,E6Lo4VBoC0yT1PYgOG2gmg,,,N,0,0,,,2014-04-13 07:21,2014-04-14 16:04,admin,admin,
2674,142771,6971,40420,7842,0,N,N,N,CP_Phys,TT_Task,DT_FixedDrtn,TK_NotStart,CZA-TK-2400-1180,Erection and Fit-up,8384,3596,0,10,0,50.515708,50.515708,10,0,0,0,,,,2015-05-07 13:00,2015-05-09 13:00,,2014-03-15 07:00,2014-03-15 17:00,2014-03-15 07:00,2014-03-15 17:00,2014-03-15 07:00,2014-03-15 17:00,2015-05-07 13:00,2015-05-09 13:00,,PT_Normal,,,,,U15Ing+sDE2Lh0TdgyLihw,1fLtOkID4USsoZiOMIoLqA,,,N,0,0,,,2014-04-13 07:21,2014-04-14 16:04,admin,admin,
2675,142772,6971,40420,7842,0,N,N,N,CP_Phys,TT_Task,DT_FixedDrtn,TK_NotStart,CZA-TK-2400-1190,Welding,8384,3596,0,10,0,63.144635,63.144635,10,0,0,0,,,,2015-05-09 13:00,2015-05-10 13:00,,2014-03-16 07:00,2014-03-16 17:00,2014-03-16 07:00,2014-03-16 17:00,2014-03-16 07:00,2014-03-16 17:00,2015-05-09 13:00,2015-05-10 13:00,,PT_Normal,,,,,zC4eqD47MUm2Rr2Z0jSr/g,3RILvsatokSR2cgMkZxFJQ,,,N,0,0,,,2014-04-13 07:21,2014-04-14 16:04,admin,admin,
2676,142773,6971,40420,7842,0,N,N,N,CP_Phys,TT_Task,DT_FixedDrtn,TK_NotStart,CZA-TK-2400-1200,Inspection,8384,3596,0,20,0,12.628927,12.628927,20,0,0,0,,,,2015-05-07 13:00,2015-05-10 13:00,,2014-03-15 07:00,2014-03-16 17:00,2014-03-15 07:00,2014-03-16 17:00,2014-03-15 07:00,2014-03-16 17:00,2015-05-07 13:00,2015-05-10 13:00,,PT_Normal,,,,,UhUorDfrJ0C2WoF8EOBwiA,n0S4TbPN6EOJ6Xq2ln0XPw,,,N,0,0,,,2014-04-13 07:21,2014-04-14 16:04,admin,admin,
2677,142774,6971,40421,7842,0,N,N,N,CP_Phys,TT_Task,DT_FixedDrtn,TK_NotStart,CZA-TK-2400-1450,Erection and Fit-up,8384,3596,0,20,0,0,0,20,40,0,40,,,,2015-05-27 09:00,2015-05-30 09:00,,2014-04-02 13:00,2014-04-05 13:00,2014-04-02 13:00,2014-04-05 13:00,2014-04-02 13:00,2014-04-05 13:00,2015-05-27 09:00,2015-05-30 09:00,,PT_Normal,,,,,tTrRV6sOnkGQJz8IYPNdTg,DKEo/ibBLEySvEDQT8snLQ,,,N,0,0,,,2014-04-13 07:21,2014-04-14 16:04,admin,admin,
2678,142775,6971,40421,7842,0,N,N,N,CP_Phys,TT_Task,DT_FixedDrtn,TK_NotStart,CZA-TK-2400-1460,Welding,8384,3596,0,40,0,0,0,40,80,0,80,,,,2015-05-30 09:00,2015-06-03 09:00,,2014-04-05 13:00,2014-04-09 13:00,2014-04-05 13:00,2014-04-09 13:00,2014-04-05 13:00,2014-04-09 13:00,2015-05-30 09:00,2015-06-03 09:00,,PT_Normal,,,,,EQkt9XopxEKR74sM4L1jHg,qRkvgRKmaUWOLjG6xvQh+Q,,,N,0,0,,,2014-04-13 07:21,2014-04-14 16:04,admin,admin,
2679,142776,6971,40421,7842,0,N,N,N,CP_Phys,TT_Task,DT_FixedDrtn,TK_NotStart,CZA-TK-2400-1470,Inspection,8384,3596,0,60,0,0,0,60,0,0,0,,,,2015-05-27 09:00,2015-06-03 09:00,,2014-04-02 13:00,2014-04-09 13:00,2014-04-02 13:00,2014-04-09 13:00,2014-04-02 13:00,2014-04-09 13:00,2015-05-27 09:00,2015-06-03 09:00,,PT_Normal,,,,,VK2Aefj+sEqp88RG8VsOPg,GgO/xwUyZ0qNZDD5nEZPVQ,,,N,0,0,,,2014-04-13 07:21,2014-04-14 16:04,admin,admin,
2680,142777,6971,40424,7842,0,N,N,N,CP_Phys,TT_Task,DT_FixedDrtn,TK_NotStart,CZA-TK-3208-1730,Erection and Fit-up,8386,2742,0,10,0,13.700455,13.700455,10,20,0,20,,,,2015-04-01 15:00,2015-04-02 15:00,,2014-05-17 13:00,2014-05-18 13:00,2014-05-17 13:00,2014-05-18 13:00,2014-05-17 13:00,2014-05-18 13:00,2015-04-01 15:00,2015-04-02 15:00,,PT_Normal,,,,,ldNl4UkK5EiwvzcKT140dg,i68Wq11UqE2ClRhh3bR3fw,,,N,0,0,,,2014-04-13 07:21,2014-04-14 16:04,admin,admin,
2681,142778,6971,40424,7842,0,N,N,N,CP_Phys,TT_Task,DT_FixedDrtn,TK_NotStart,CZA-TK-3208-1740,Welding,8386,2742,0,30,0,17.125569,17.125569,30,60,0,60,,,,2015-04-02 15:00,2015-04-06 15:00,,2014-05-18 13:00,2014-05-21 13:00,2014-05-18 13:00,2014-05-21 13:00,2014-05-18 13:00,2014-05-21 13:00,2015-04-02 15:00,2015-04-06 15:00,,PT_Normal,,,,,biXhRFHpIUale2tc4yUa/g,cSxdYNOHZkW/hJqOuRRKYQ,,,N,0,0,,,2014-04-13 07:21,2014-04-14 16:04,admin,admin,
2682,142779,6971,40424,7842,0,N,N,N,CP_Phys,TT_Task,DT_FixedDrtn,TK_NotStart,CZA-TK-3208-1750,Inspection,8386,2742,0,40,0,3.425114,3.425114,40,0,0,0,,,,2015-04-01 15:00,2015-04-06 15:00,,2014-05-17 13:00,2014-05-21 13:00,2014-05-17 13:00,2014-05-21 13:00,2014-05-17 13:00,2014-05-21 13:00,2015-04-01 15:00,2015-04-06 15:00,,PT_Normal,,,,,y7cyazRu7EuSRl9nDIEipQ,jjHwt/bTykyMdthDosjS5A,,,N,0,0,,,2014-04-13 07:21,2014-04-14 16:04,admin,admin,
2683,142780,6971,40216,7842,0,N,N,N,CP_Phys,TT_Task,DT_FixedDrtn,TK_NotStart,CZA-TK-3208-1640,Erection and Fit-up,8386,2742,0,10,0,33.59024,33.59024,10,0,0,0,,,,2015-03-17 15:00,2015-03-18 15:00,,2014-05-01 13:00,2014-05-03 13:00,2014-05-01 13:00,2014-05-03 13:00,2014-05-01 13:00,2014-05-03 13:00,2015-03-17 15:00,2015-03-18 15:00,,PT_Normal,,,,,LkrG19NSy0iKfPUsZSIcLQ,iceb/BSC2k6wezLhPLF5Cg,,,N,0,0,,,2014-04-13 07:21,2014-04-14 16:04,admin,admin,
2684,142781,6971,40216,7842,0,N,N,N,CP_Phys,TT_Task,DT_FixedDrtn,TK_NotStart,CZA-TK-3208-1650,Welding,8386,2742,0,30,0,41.9878,41.9878,30,60,0,60,,,,2015-03-18 15:00,2015-03-22 15:00,,2014-05-03 13:00,2014-05-06 13:00,2014-05-03 13:00,2014-05-06 13:00,2014-05-03 13:00,2014-05-06 13:00,2015-03-18 15:00,2015-03-22 15:00,,PT_Normal,,,,,GcG0KBQMKEOL42Vpy+e6+w,/wsncibzw0Gewjf8ZvZfWQ,,,N,0,0,,,2014-04-13 07:21,2014-04-14 16:04,admin,admin,
2685,142782,6971,40216,7842,0,N,N,N,CP_Phys,TT_Task,DT_FixedDrtn,TK_NotStart,CZA-TK-3208-1660,Inspection,8386,2742,0,40,0,8.39756,8.39756,40,0,0,0,,,,2015-03-17 15:00,2015-03-22 15:00,,2014-05-01 13:00,2014-05-06 13:00,2014-05-01 13:00,2014-05-06 13:00,2014-05-01 13:00,2014-05-06 13:00,2015-03-17 15:00,2015-03-22 15:00,,PT_Normal,,,,,qTo/5/JCZUS3DDmmuKB7MQ,77JkrwgpNESTWgktq32+fg,,,N,0,0,,,2014-04-13 07:21,2014-04-14 16:04,admin,admin,
2686,142783,6971,40217,7842,0,N,N,N,CP_Phys,TT_Task,DT_FixedDrtn,TK_NotStart,CZA-TK-3208-1820,Installation and Fit-up,8386,2742,0,20,0,35.774955,35.774955,20,40,0,40,,,,2015-04-25 15:00,2015-04-27 15:00,,2014-06-09 13:00,2014-06-11 13:00,2014-06-09 13:00,2014-06-11 13:00,2014-06-09 13:00,2014-06-11 13:00,2015-04-25 15:00,2015-04-27 15:00,,PT_Normal,,,,,O6bjxsY1TEyvPQcJmZHAag,at79JIFiMUqzjkP5bwmh+Q,,,N,0,0,,,2014-04-13 07:21,2014-04-14 16:04,admin,admin,
2687,142784,6971,40217,7842,0,N,N,N,CP_Phys,TT_Task,DT_FixedDrtn,TK_NotStart,CZA-TK-3208-1830,Welding,8386,2742,0,40,0,44.718694,44.718694,40,80,0,80,,,,2015-04-27 15:00,2015-05-02 15:00,,2014-06-11 13:00,2014-06-16 13:00,2014-06-11 13:00,2014-06-16 13:00,2014-06-11 13:00,2014-06-16 13:00,2015-04-27 15:00,2015-05-02 15:00,,PT_Normal,,,,,/GNlNgsAykWl7jc2DppnQQ,l9HkPO8/Aku28JY9nNlOtg,,,N,0,0,,,2014-04-13 07:21,2014-04-14 16:04,admin,admin,
2688,142785,6971,40217,7842,0,N,N,N,CP_Phys,TT_Task,DT_FixedDrtn,TK_NotStart,CZA-TK-3208-1840,Inspection,8386,2742,0,60,0,8.943739,8.943739,60,0,0,0,,,,2015-04-25 15:00,2015-05-02 15:00,,2014-06-09 13:00,2014-06-16 13:00,2014-06-09 13:00,2014-06-16 13:00,2014-06-09 13:00,2014-06-16 13:00,2015-04-25 15:00,2015-05-02 15:00,,PT_Normal,,,,,TmmLSeUc80ShDsmBH83lvw,Gg91Z9+w5kSrUMaJjR9JjA,,,N,0,0,,,2014-04-13 07:21,2014-04-14 16:04,admin,admin,
2689,142786,6971,40327,7842,0,N,N,N,CP_Phys,TT_Task,DT_FixedDrtn,TK_NotStart,CZA-TK-3208-1850,Erection and Fit-up,8386,2742,0,30,0,0,0,30,60,0,60,,,,2015-05-02 15:00,2015-05-05 15:00,,2014-06-16 13:00,2014-06-19 13:00,2014-06-16 13:00,2014-06-19 13:00,2014-06-16 13:00,2014-06-19 13:00,2015-05-02 15:00,2015-05-05 15:00,,PT_Normal,,,,,34jB9W+jDUiGH+PSjdPNDA,fLx+zluPwUauhiHd3UvLOQ,,,N,0,0,,,2014-04-13 07:21,2014-04-14 16:04,admin,admin,
2690,142787,6971,40327,7842,0,N,N,N,CP_Phys,TT_Task,DT_FixedDrtn,TK_NotStart,CZA-TK-3208-1860,Welding,8386,2742,0,100,0,0,0,100,200,0,200,,,,2015-05-05 15:00,2015-05-17 15:00,,2014-06-19 13:00,2014-07-01 13:00,2014-06-19 13:00,2014-07-01 13:00,2014-06-19 13:00,2014-07-01 13:00,2015-05-05 15:00,2015-05-17 15:00,,PT_Normal,,,,,T4nXmRMT3U+2pdTXcCRL2g,4tXqJOrR2k2N17zVFxEr+w,,,N,0,0,,,2014-04-13 07:21,2014-04-14 16:04,admin,admin,
2691,142788,6971,40327,7842,0,N,N,N,CP_Phys,TT_Task,DT_FixedDrtn,TK_NotStart,CZA-TK-3208-1870,Inspection,8386,2742,0,130,0,0,0,130,0,0,0,,,,2015-05-02 15:00,2015-05-17 15:00,,2014-06-16 13:00,2014-07-01 13:00,2014-06-16 13:00,2014-07-01 13:00,2014-06-16 13:00,2014-07-01 13:00,2015-05-02 15:00,2015-05-17 15:00,,PT_Normal,,,,,oTsS91tt40u8YBD67VsTuw,zq/EWkvn2UWVOz5q9oh9PQ,,,N,0,0,,,2014-04-13 07:21,2014-04-14 16:04,admin,admin,
2692,142789,6971,40328,7842,0,N,N,N,CP_Phys,TT_Task,DT_FixedDrtn,TK_NotStart,CZA-TK-3208-1670,Erection and Fit-up,8386,2742,0,10,0,129.179896,129.179896,10,0,0,0,,,,2015-03-22 15:00,2015-03-23 15:00,,2014-05-06 13:00,2014-05-07 13:00,2014-05-06 13:00,2014-05-07 13:00,2014-05-06 13:00,2014-05-07 13:00,2015-03-22 15:00,2015-03-23 15:00,,PT_Normal,,,,,Cl1uEnt/aUGPYn2ERXLn2g,hpBix4mmsEKT/Ey3St7EHw,,,N,0,0,,,2014-04-13 07:21,2014-04-14 16:04,admin,admin,
2693,142790,6971,40328,7842,0,N,N,N,CP_Phys,TT_Task,DT_FixedDrtn,TK_NotStart,CZA-TK-3208-1680,Welding,8386,2742,0,30,0,161.47487,161.47487,30,60,0,60,,,,2015-03-23 15:00,2015-03-26 15:00,,2014-05-07 13:00,2014-05-11 13:00,2014-05-07 13:00,2014-05-11 13:00,2014-05-07 13:00,2014-05-11 13:00,2015-03-23 15:00,2015-03-26 15:00,,PT_Normal,,,,,gnS+1cwT4kKmWKoeHYT8tQ,KWyl8O8VwkKcIBRTP4aPVw,,,N,0,0,,,2014-04-13 07:21,2014-04-14 16:04,admin,admin,
2694,142791,6971,40328,7842,0,N,N,N,CP_Phys,TT_Task,DT_FixedDrtn,TK_NotStart,CZA-TK-3208-1690,Inspection,8386,2742,0,40,0,32.294974,32.294974,40,0,0,0,,,,2015-03-22 15:00,2015-03-26 15:00,,2014-05-06 13:00,2014-05-11 13:00,2014-05-06 13:00,2014-05-11 13:00,2014-05-06 13:00,2014-05-11 13:00,2015-03-22 15:00,2015-03-26 15:00,,PT_Normal,,,,,EfyxT5qx60G7/deIB/kj0Q,CzHg9JQVHkCe2+Cq3RXdJw,,,N,0,0,,,2014-04-13 07:21,2014-04-14 16:04,admin,admin,
2695,142792,6971,40329,7842,0,N,N,N,CP_Phys,TT_Task,DT_FixedDrtn,TK_NotStart,CZA-TK-3208-1550,Erection and Fit-up,8386,2742,0,10,0,63.125591,63.125591,10,20,0,20,,,,2015-03-03 15:00,2015-03-04 15:00,,2014-04-17 13:00,2014-04-19 13:00,2014-04-17 13:00,2014-04-19 13:00,2014-04-17 13:00,2014-04-19 13:00,2015-03-03 15:00,2015-03-04 15:00,,PT_Normal,,,,,szxfqW1++0yx5CCy4UNFuQ,VRT7J8dcqE6FctJKUGTgow,,,N,0,0,,,2014-04-13 07:21,2014-04-14 16:04,admin,admin,
2696,142793,6971,40329,7842,0,N,N,N,CP_Phys,TT_Task,DT_FixedDrtn,TK_NotStart,CZA-TK-3208-1560,Welding,8386,2742,0,30,0,78.906989,78.906989,30,60,0,60,,,,2015-03-04 15:00,2015-03-08 15:00,,2014-04-19 13:00,2014-04-22 13:00,2014-04-19 13:00,2014-04-22 13:00,2014-04-19 13:00,2014-04-22 13:00,2015-03-04 15:00,2015-03-08 15:00,,PT_Normal,,,,,w7ThDBTV2U+bdgnjrkoOPA,MVeEjRcU3UuxEHRrheaAWw,,,N,0,0,,,2014-04-13 07:21,2014-04-14 16:04,admin,admin,
2697,142794,6971,40329,7842,0,N,N,N,CP_Phys,TT_Task,DT_FixedDrtn,TK_NotStart,CZA-TK-3208-1570,Inspection,8386,2742,0,40,0,15.781398,15.781398,40,0,0,0,,,,2015-03-03 15:00,2015-03-08 15:00,,2014-04-17 13:00,2014-04-22 13:00,2014-04-17 13:00,2014-04-22 13:00,2014-04-17 13:00,2014-04-22 13:00,2015-03-03 15:00,2015-03-08 15:00,,PT_Normal,,,,,S7+szhm7skGUDdw1qYHlUA,J0tozFSTX0qKn52nLQJa9g,,,N,0,0,,,2014-04-13 07:21,2014-04-14 16:04,admin,admin,
2698,142795,6971,40221,7842,0,N,N,N,CP_Phys,TT_Task,DT_FixedDrtn,TK_NotStart,CZA-TK-3208-1580,Erection and Fit-up,8386,2742,0,10,0,13.185776,13.185776,10,20,0,20,,,,2015-03-08 15:00,2015-03-09 15:00,,2014-04-22 13:00,2014-04-23 13:00,2014-04-22 13:00,2014-04-23 13:00,2014-04-22 13:00,2014-04-23 13:00,2015-03-08 15:00,2015-03-09 15:00,,PT_Normal,,,,,dHvNBCc8AkyQuq7ujG1icg,fbAykBCsgk+Flc4tfmLTNA,,,N,0,0,,,2014-04-13 07:21,2014-04-14 16:04,admin,admin,
2699,142796,6971,40221,7842,0,N,N,N,CP_Phys,TT_Task,DT_FixedDrtn,TK_NotStart,CZA-TK-3208-1590,Welding,8386,2742,0,30,0,16.482221,16.482221,30,60,0,60,,,,2015-03-09 15:00,2015-03-12 15:00,,2014-04-23 13:00,2014-04-27 13:00,2014-04-23 13:00,2014-04-27 13:00,2014-04-23 13:00,2014-04-27 13:00,2015-03-09 15:00,2015-03-12 15:00,,PT_Normal,,,,,xKYL5kXSKEGpVJST+dNEEw,A3H/aokJ3kedhmhyuemmBw,,,N,0,0,,,2014-04-13 07:21,2014-04-14 16:04,admin,admin,
2700,142797,6971,40221,7842,0,N,N,N,CP_Phys,TT_Task,DT_FixedDrtn,TK_NotStart,CZA-TK-3208-1600,Inspection,8386,2742,0,40,0,3.296444,3.296444,40,0,0,0,,,,2015-03-08 15:00,2015-03-12 15:00,,2014-04-22 13:00,2014-04-27 13:00,2014-04-22 13:00,2014-04-27 13:00,2014-04-22 13:00,2014-04-27 13:00,2015-03-08 15:00,2015-03-12 15:00,,PT_Normal,,,,,pHpJe6zvSkSlK+n4xK83Pw,EAplHkTri0mJlQ5ficU/NA,,,N,0,0,,,2014-04-13 07:21,2014-04-14 16:04,admin,admin,
2701,142798,6971,40222,7842,0,N,N,N,CP_Phys,TT_Task,DT_FixedDrtn,TK_NotStart,CZA-TK-3208-1610,Erection and Fit-up,8386,2742,0,10,0,54.108963,54.108963,10,20,0,20,,,,2015-03-12 15:00,2015-03-14 15:00,,2014-04-27 13:00,2014-04-28 13:00,2014-04-27 13:00,2014-04-28 13:00,2014-04-27 13:00,2014-04-28 13:00,2015-03-12 15:00,2015-03-14 15:00,,PT_Normal,,,,,r0yUdEgKAUyVycC08INcUA,5D2H+yZ8zEOguDa49GE0yg,,,N,0,0,,,2014-04-13 07:21,2014-04-14 16:04,admin,admin,
2702,142799,6971,40222,7842,0,N,N,N,CP_Phys,TT_Task,DT_FixedDrtn,TK_NotStart,CZA-TK-3208-1620,Welding,8386,2742,0,30,0,67.636204,67.636204,30,60,0,60,,,,2015-03-14 15:00,2015-03-17 15:00,,2014-04-28 13:00,2014-05-01 13:00,2014-04-28 13:00,2014-05-01 13:00,2014-04-28 13:00,2014-05-01 13:00,2015-03-14 15:00,2015-03-17 15:00,,PT_Normal,,,,,RAMAjh4gb0qdMUiqT4MoSw,BuvfIAQmqkSQIM9MZ/Biag,,,N,0,0,,,2014-04-13 07:21,2014-04-14 16:04,admin,admin,
2703,142800,6971,40222,7842,0,N,N,N,CP_Phys,TT_Task,DT_FixedDrtn,TK_NotStart,CZA-TK-3208-1630,Inspection,8386,2742,0,40,0,13.527241,13.527241,40,0,0,0,,,,2015-03-12 15:00,2015-03-17 15:00,,2014-04-27 13:00,2014-05-01 13:00,2014-04-27 13:00,2014-05-01 13:00,2014-04-27 13:00,2014-05-01 13:00,2015-03-12 15:00,2015-03-17 15:00,,PT_Normal,,,,,rQu8BG+peUub+Y644S7hTA,mmaCH4/2+kmjz43qH4pEHQ,,,N,0,0,,,2014-04-13 07:21,2014-04-14 16:04,admin,admin,
2704,142801,6971,40223,7842,0,N,N,N,CP_Phys,TT_Task,DT_FixedDrtn,TK_NotStart,CZA-TK-3208-1880,Erection and Fit-up,8386,2742,0,30,0,0,0,30,60,0,60,,,,2015-05-17 15:00,2015-05-20 15:00,,2014-07-01 13:00,2014-07-05 13:00,2014-07-01 13:00,2014-07-05 13:00,2014-07-01 13:00,2014-07-05 13:00,2015-05-17 15:00,2015-05-20 15:00,,PT_Normal,,,,,Xcb64xClQ0mXSSPgwgw25A,K2dl7ztfZ0iKBCv1Tr394w,,,N,0,0,,,2014-04-13 07:21,2014-04-14 16:04,admin,admin,
2705,142802,6971,40223,7842,0,N,N,N,CP_Phys,TT_Task,DT_FixedDrtn,TK_NotStart,CZA-TK-3208-1890,Welding,8386,2742,0,90,0,0,0,90,180,0,180,,,,2015-05-20 15:00,2015-05-31 15:00,,2014-07-05 13:00,2014-07-15 13:00,2014-07-05 13:00,2014-07-15 13:00,2014-07-05 13:00,2014-07-15 13:00,2015-05-20 15:00,2015-05-31 15:00,,PT_Normal,,,,,1oHIX81NE0C7yieNq4/6QA,JxfBCyfkYkWWcG+//J9eXA,,,N,0,0,,,2014-04-13 07:21,2014-04-14 16:04,admin,admin,
2706,142803,6971,40223,7842,0,N,N,N,CP_Phys,TT_Task,DT_FixedDrtn,TK_NotStart,CZA-TK-3208-1900,Inspection,8386,2742,0,120,0,0,0,120,0,0,0,,,,2015-05-17 15:00,2015-05-31 15:00,,2014-07-01 13:00,2014-07-15 13:00,2014-07-01 13:00,2014-07-15 13:00,2014-07-01 13:00,2014-07-15 13:00,2015-05-17 15:00,2015-05-31 15:00,,PT_Normal,,,,,x5hAaLNqp0amvI05cgjWtQ,jvOhDX8S50CpXX9TgKb0Ow,,,N,0,0,,,2014-04-13 07:21,2014-04-14 16:04,admin,admin,
2707,142804,6971,40224,7842,0,N,N,N,CP_Phys,TT_Task,DT_FixedDrtn,TK_NotStart,CZA-TK-3208-1700,"Cutting, Installation and Fit-up",8386,2742,0,20,0,0,0,20,40,0,40,,,,2015-03-26 15:00,2015-03-29 15:00,,2014-05-11 13:00,2014-05-13 13:00,2014-05-11 13:00,2014-05-13 13:00,2014-05-11 13:00,2014-05-13 13:00,2015-03-26 15:00,2015-03-29 15:00,,PT_Normal,,,,,WH/l6w+KfUaqAQ1ZmYBjlw,CJO/fkUzSEW9aC8hSpbUyQ,,,N,0,0,,,2014-04-13 07:21,2014-04-14 16:04,admin,admin,
2708,142805,6971,40224,7842,0,N,N,N,CP_Phys,TT_Task,DT_FixedDrtn,TK_NotStart,CZA-TK-3208-1710,Welding,8386,2742,0,30,0,0,0,30,60,0,60,,,,2015-03-29 15:00,2015-04-01 15:00,,2014-05-13 13:00,2014-05-17 13:00,2014-05-13 13:00,2014-05-17 13:00,2014-05-13 13:00,2014-05-17 13:00,2015-03-29 15:00,2015-04-01 15:00,,PT_Normal,,,,,d7s0XpqUN06/xCllUlu3sA,EJjGbO7mSkmtlN77Y0+Aog,,,N,0,0,,,2014-04-13 07:21,2014-04-14 16:04,admin,admin,
2709,142806,6971,40224,7842,0,N,N,N,CP_Phys,TT_Task,DT_FixedDrtn,TK_NotStart,CZA-TK-3208-1720,Inspection,8386,2742,0,50,0,0,0,50,0,0,0,,,,2015-03-26 15:00,2015-04-01 15:00,,2014-05-11 13:00,2014-05-17 13:00,2014-05-11 13:00,2014-05-17 13:00,2014-05-11 13:00,2014-05-17 13:00,2015-03-26 15:00,2015-04-01 15:00,,PT_Normal,,,,,ROj/GS3Vhk2foO5Q4CAP8w,nlOQuszbFk2QOhVgyvePWQ,,,N,0,0,,,2014-04-13 07:21,2014-04-14 16:04,admin,admin,
2710,142807,6971,40434,7842,0,N,N,N,CP_Phys,TT_Task,DT_FixedDrtn,TK_NotStart,CZA-TK-3208-1400,Laying and Fit-up,8386,2742,0,10,0,36.900474,36.900474,10,20,0,20,,,,2015-02-07 15:00,2015-02-08 15:00,,2014-03-24 13:00,2014-03-25 13:00,2014-03-24 13:00,2014-03-25 13:00,2014-03-24 13:00,2014-03-25 13:00,2015-02-07 15:00,2015-02-08 15:00,,PT_Normal,,,,,mLF+dMRdpkq7FJ2XSy3MoA,IaSewwioI0+9aYeY/Szl/g,,,N,0,0,,,2014-04-13 07:21,2014-04-14 16:04,admin,admin,
2711,142808,6971,40434,7842,0,N,N,N,CP_Phys,TT_Task,DT_FixedDrtn,TK_NotStart,CZA-TK-3208-1410,Welding,8386,2742,0,20,0,46.125593,46.125593,20,40,0,40,,,,2015-02-08 15:00,2015-02-10 15:00,,2014-03-25 13:00,2014-03-27 13:00,2014-03-25 13:00,2014-03-27 13:00,2014-03-25 13:00,2014-03-27 13:00,2015-02-08 15:00,2015-02-10 15:00,,PT_Normal,,,,,iCj3QAXY00+Xn4Td6SPVIg,ZgUALlOFlUm6YJeUOG1aIw,,,N,0,0,,,2014-04-13 07:21,2014-04-14 16:04,admin,admin,
2712,142809,6971,40434,7842,0,N,N,N,CP_Phys,TT_Task,DT_FixedDrtn,TK_NotStart,CZA-TK-3208-1420,Inspection,8386,2742,0,30,0,9.225119,9.225119,30,0,0,0,,,,2015-02-07 15:00,2015-02-10 15:00,,2014-03-24 13:00,2014-03-27 13:00,2014-03-24 13:00,2014-03-27 13:00,2014-03-24 13:00,2014-03-27 13:00,2015-02-07 15:00,2015-02-10 15:00,,PT_Normal,,,,,+ESGBgmNeECRcVzhYSkF/Q,Z4a46Cbn80yCZ4hdlGc25w,,,N,0,0,,,2014-04-13 07:21,2014-04-14 16:04,admin,admin,
2713,142810,6971,40435,7842,0,N,N,N,CP_Phys,TT_Task,DT_FixedDrtn,TK_NotStart,CZA-TK-3208-1430,Erection and Fit-up,8386,2742,0,10,0,96.725025,96.725025,10,0,0,0,,,,2015-02-10 15:00,2015-02-11 15:00,,2014-03-27 13:00,2014-03-29 13:00,2014-03-27 13:00,2014-03-29 13:00,2014-03-27 13:00,2014-03-29 13:00,2015-02-10 15:00,2015-02-11 15:00,,PT_Normal,,,,,phwOYNUp2UOMqLACaCK2MA,/Lj/VK9XS0y/gQOVGqPAHw,,,N,0,0,,,2014-04-13 07:21,2014-04-14 16:04,admin,admin,
2714,142811,6971,40435,7842,0,N,N,N,CP_Phys,TT_Task,DT_FixedDrtn,TK_NotStart,CZA-TK-3208-1440,Welding,8386,2742,0,40,0,120.906281,120.906281,40,120,0,120,,,,2015-02-11 15:00,2015-02-16 15:00,,2014-03-29 13:00,2014-04-02 13:00,2014-03-29 13:00,2014-04-02 13:00,2014-03-29 13:00,2014-04-02 13:00,2015-02-11 15:00,2015-02-16 15:00,,PT_Normal,,,,,pRmjXsV1rESHntES0MfSNw,56RB8eMb8Ue3vXeI3cordg,,,N,0,0,,,2014-04-13 07:21,2014-04-14 16:04,admin,admin,
2715,142812,6971,40435,7842,0,N,N,N,CP_Phys,TT_Task,DT_FixedDrtn,TK_NotStart,CZA-TK-3208-1450,Inspection,8386,2742,0,50,0,24.181256,24.181256,50,0,0,0,,,,2015-02-10 15:00,2015-02-16 15:00,,2014-03-27 13:00,2014-04-02 13:00,2014-03-27 13:00,2014-04-02 13:00,2014-03-27 13:00,2014-04-02 13:00,2015-02-10 15:00,2015-02-16 15:00,,PT_Normal,,,,,FGlpxTy9q0u50Kypu6ahUg,3tsGAO9jSEujcN4i+qPZLg,,,N,0,0,,,2014-04-13 07:21,2014-04-14 16:04,admin,admin,
2716,142813,6971,40436,7842,0,N,N,N,CP_Phys,TT_Task,DT_FixedDrtn,TK_NotStart,CZA-TK-3208-1460,Erection and Fit-up,8386,2742,0,10,0,87.220497,87.220497,10,0,0,0,,,,2015-02-16 15:00,2015-02-17 15:00,,2014-04-02 13:00,2014-04-03 13:00,2014-04-02 13:00,2014-04-03 13:00,2014-04-02 13:00,2014-04-03 13:00,2015-02-16 15:00,2015-02-17 15:00,,PT_Normal,,,,,cJqknEyFTEuNYB+gOUM4jg,/AkY+Q7sKUCVv/r1quSGww,,,N,0,0,,,2014-04-13 07:21,2014-04-14 16:04,admin,admin,
2717,142814,6971,40436,7842,0,N,N,N,CP_Phys,TT_Task,DT_FixedDrtn,TK_NotStart,CZA-TK-3208-1470,Welding,8386,2742,0,30,0,109.025621,109.025621,30,60,0,60,,,,2015-02-17 15:00,2015-02-21 15:00,,2014-04-03 13:00,2014-04-07 13:00,2014-04-03 13:00,2014-04-07 13:00,2014-04-03 13:00,2014-04-07 13:00,2015-02-17 15:00,2015-02-21 15:00,,PT_Normal,,,,,ZOc+777M1UeU6HOfcOsYrQ,Fx3PXPrtlEmhXCtLjS5Kcg,,,N,0,0,,,2014-04-13 07:21,2014-04-14 16:04,admin,admin,
2718,142815,6971,40436,7842,0,N,N,N,CP_Phys,TT_Task,DT_FixedDrtn,TK_NotStart,CZA-TK-3208-1480,Inspection,8386,2742,0,40,0,21.805124,21.805124,40,0,0,0,,,,2015-02-16 15:00,2015-02-21 15:00,,2014-04-02 13:00,2014-04-07 13:00,2014-04-02 13:00,2014-04-07 13:00,2014-04-02 13:00,2014-04-07 13:00,2015-02-16 15:00,2015-02-21 15:00,,PT_Normal,,,,,Drdxy34zZEWpOFCMVG9F1Q,aM0xzuyYpkup0caA3ggebQ,,,N,0,0,,,2014-04-13 07:21,2014-04-14 16:04,admin,admin,
2719,142816,6971,40437,7842,0,N,N,N,CP_Phys,TT_Task,DT_FixedDrtn,TK_NotStart,CZA-TK-3208-1490,Erection and Fit-up,8386,2742,0,10,0,15.076964,15.076964,10,20,0,20,,,,2015-02-21 15:00,2015-02-22 15:00,,2014-04-07 13:00,2014-04-08 13:00,2014-04-07 13:00,2014-04-08 13:00,2014-04-07 13:00,2014-04-08 13:00,2015-02-21 15:00,2015-02-22 15:00,,PT_Normal,,,,,LFw4yYh15UG3fJkGDnroPQ,d3XWY8dgeUa8Ut0UR7b4Lw,,,N,0,0,,,2014-04-13 07:21,2014-04-14 16:04,admin,admin,
2720,142817,6971,40437,7842,0,N,N,N,CP_Phys,TT_Task,DT_FixedDrtn,TK_NotStart,CZA-TK-3208-1500,Welding,8386,2742,0,30,0,18.846204,18.846204,30,60,0,60,,,,2015-02-22 15:00,2015-02-25 15:00,,2014-04-08 13:00,2014-04-12 13:00,2014-04-08 13:00,2014-04-12 13:00,2014-04-08 13:00,2014-04-12 13:00,2015-02-22 15:00,2015-02-25 15:00,,PT_Normal,,,,,NANGljTCgEu6xElru4gJpw,wFoYg5tdvEGDkeIvWKkBdg,,,N,0,0,,,2014-04-13 07:21,2014-04-14 16:04,admin,admin,
2721,142818,6971,40437,7842,0,N,N,N,CP_Phys,TT_Task,DT_FixedDrtn,TK_NotStart,CZA-TK-3208-1510,Inspection,8386,2742,0,40,0,3.769241,3.769241,40,0,0,0,,,,2015-02-21 15:00,2015-02-25 15:00,,2014-04-07 13:00,2014-04-12 13:00,2014-04-07 13:00,2014-04-12 13:00,2014-04-07 13:00,2014-04-12 13:00,2015-02-21 15:00,2015-02-25 15:00,,PT_Normal,,,,,5+X5z5LfKESOdR4r75WSjg,M++EPMpss0yYcbT3iuiI4g,,,N,0,0,,,2014-04-13 07:21,2014-04-14 16:04,admin,admin,
2722,142819,6971,40438,7842,0,N,N,N,CP_Phys,TT_Task,DT_FixedDrtn,TK_NotStart,CZA-TK-3208-1520,"Cutting, Installation and Fit-up",8386,2742,0,20,0,0,0,20,40,0,40,,,,2015-02-25 15:00,2015-02-28 15:00,,2014-04-12 13:00,2014-04-14 13:00,2014-04-12 13:00,2014-04-14 13:00,2014-04-12 13:00,2014-04-14 13:00,2015-02-25 15:00,2015-02-28 15:00,,PT_Normal,,,,,dsk2VUbkZ0ufONhvLUkg9g,0FWZNvMJUEuTYQmvDS2FpA,,,N,0,0,,,2014-04-13 07:21,2014-04-14 16:04,admin,admin,
2723,142820,6971,40438,7842,0,N,N,N,CP_Phys,TT_Task,DT_FixedDrtn,TK_NotStart,CZA-TK-3208-1530,Welding,8386,2742,0,30,0,0,0,30,60,0,60,,,,2015-02-28 15:00,2015-03-03 15:00,,2014-04-14 13:00,2014-04-17 13:00,2014-04-14 13:00,2014-04-17 13:00,2014-04-14 13:00,2014-04-17 13:00,2015-02-28 15:00,2015-03-03 15:00,,PT_Normal,,,,,mQBTr/kupE+6wNvxk9lrMg,TA+r9mZNo0iIM/AvaVt3Ig,,,N,0,0,,,2014-04-13 07:21,2014-04-14 16:04,admin,admin,
2724,142821,6971,40438,7842,0,N,N,N,CP_Phys,TT_Task,DT_FixedDrtn,TK_NotStart,CZA-TK-3208-1540,Inspection,8386,2742,0,50,0,0,0,50,0,0,0,,,,2015-02-25 15:00,2015-03-03 15:00,,2014-04-12 13:00,2014-04-17 13:00,2014-04-12 13:00,2014-04-17 13:00,2014-04-12 13:00,2014-04-17 13:00,2015-02-25 15:00,2015-03-03 15:00,,PT_Normal,,,,,vsLynvsb+kKJNE6lDvWy1w,g5H+ZlwilkKK1JIUP2kM+Q,,,N,0,0,,,2014-04-13 07:21,2014-04-14 16:04,admin,admin,
2725,142822,6971,40439,7842,0,N,N,N,CP_Phys,TT_Task,DT_FixedDrtn,TK_NotStart,CZA-TK-3208-1760,Laying and Fit-up,8386,2742,0,20,0,44.469162,44.469162,20,40,0,40,,,,2015-04-06 15:00,2015-04-08 15:00,,2014-05-21 13:00,2014-05-24 13:00,2014-05-21 13:00,2014-05-24 13:00,2014-05-21 13:00,2014-05-24 13:00,2015-04-06 15:00,2015-04-08 15:00,,PT_Normal,,,,,/bT/oTlcfU+YMD5gx9B21w,WLbsfA/A60ucBMpovKj43w,,,N,0,0,,,2014-04-13 07:21,2014-04-14 16:04,admin,admin,
2726,142823,6971,40439,7842,0,N,N,N,CP_Phys,TT_Task,DT_FixedDrtn,TK_NotStart,CZA-TK-3208-1770,Welding,8386,2742,0,60,0,55.586453,55.586453,60,120,0,120,,,,2015-04-08 15:00,2015-04-15 15:00,,2014-05-24 13:00,2014-05-31 13:00,2014-05-24 13:00,2014-05-31 13:00,2014-05-24 13:00,2014-05-31 13:00,2015-04-08 15:00,2015-04-15 15:00,,PT_Normal,,,,,B/N+TOQGB0Gjrrti6CbHzA,b5ZysPO230mOAx0H73CcwA,,,N,0,0,,,2014-04-13 07:21,2014-04-14 16:04,admin,admin,
2727,142824,6971,40439,7842,0,N,N,N,CP_Phys,TT_Task,DT_FixedDrtn,TK_NotStart,CZA-TK-3208-1780,Inspection,8386,2742,0,80,0,11.117291,11.117291,80,0,0,0,,,,2015-04-06 15:00,2015-04-15 15:00,,2014-05-21 13:00,2014-05-31 13:00,2014-05-21 13:00,2014-05-31 13:00,2014-05-21 13:00,2014-05-31 13:00,2015-04-06 15:00,2015-04-15 15:00,,PT_Normal,,,,,s98CAismoUqDOHybHw2eiQ,5Jj+ArHHb0CsDIl08Nb4ZQ,,,N,0,0,,,2014-04-13 07:21,2014-04-14 16:04,admin,admin,
2728,142825,6971,40231,7842,0,N,N,N,CP_Phys,TT_Task,DT_FixedDrtn,TK_NotStart,CZA-TK-3208-1790,Laying and Fit-up,8386,2742,0,10,0,87.569972,87.569972,10,0,0,0,,,,2015-04-15 15:00,2015-04-16 15:00,,2014-05-31 13:00,2014-06-01 13:00,2014-05-31 13:00,2014-06-01 13:00,2014-05-31 13:00,2014-06-01 13:00,2015-04-15 15:00,2015-04-16 15:00,,PT_Normal,,,,,84jpXA6KSEm2MRDp6R8uVg,BCobdEJNiE+kxX/ygsCsdA,,,N,0,0,,,2014-04-13 07:21,2014-04-14 16:04,admin,admin,
2729,142826,6971,40231,7842,0,N,N,N,CP_Phys,TT_Task,DT_FixedDrtn,TK_NotStart,CZA-TK-3208-1800,Welding,8386,2782,40,30,0,109.462465,109.462465,30,60,0,60,,,,2015-04-21 15:00,2015-04-25 15:00,,2014-06-01 13:00,2014-06-04 13:00,2014-06-01 13:00,2014-06-04 13:00,2014-06-01 13:00,2014-06-04 13:00,2015-04-21 15:00,2015-04-25 15:00,,PT_Normal,,,,,uWHMnvZ9t0e8W0pOV0jK/w,EVZrOlzXCEaCX0WawvPQ5g,,,N,0,0,,,2014-04-13 07:21,2014-04-14 16:04,admin,admin,
2730,142827,6971,40231,7842,0,N,N,N,CP_Phys,TT_Task,DT_FixedDrtn,TK_NotStart,CZA-TK-3208-1810,Inspection,8386,2742,0,80,0,21.892493,21.892493,80,0,0,0,,,,2015-04-15 15:00,2015-04-25 15:00,,2014-05-31 13:00,2014-06-09 13:00,2014-05-31 13:00,2014-06-09 13:00,2014-05-31 13:00,2014-06-09 13:00,2015-04-15 15:00,2015-04-25 15:00,,PT_Normal,,,,,hHseaxKaJ0yXesfDF6K7Lw,GQ9X2eiFC0WjCdN3BMN2Rw,,,N,0,0,,,2014-04-13 07:21,2014-04-14 16:04,admin,admin,
2731,142828,6971,40023,7842,0,N,N,N,CP_Phys,TT_Task,DT_FixedDrtn,TK_NotStart,CZA-TK-3208-1920,"Blasting and Painting of Bottom, Shell and Roof (Inside & Outside)",8386,2742,0,80,0,630.395687,630.395687,80,0,0,0,,,,2015-06-10 15:00,2015-06-20 15:00,,2014-07-26 13:00,2014-08-04 13:00,2014-07-26 13:00,2014-08-04 13:00,2014-07-26 13:00,2014-08-04 13:00,2015-06-10 15:00,2015-06-20 15:00,,PT_Normal,,,,,WfVmAr+1FUSwBDZWevArqA,VLEzD8wkJU2/tMUmKh/I2Q,,,N,0,0,,,2014-04-13 07:21,2014-04-14 16:04,admin,admin,
2732,142829,6971,40024,7842,0,N,N,N,CP_Phys,TT_Task,DT_FixedDrtn,TK_NotStart,CZA-TK-3208-1930,Tank Calibration,8386,2742,0,50,0,210.131896,210.131896,50,0,0,0,,,,2015-06-20 15:00,2015-06-25 15:00,,2014-08-04 13:00,2014-08-10 13:00,2014-08-04 13:00,2014-08-10 13:00,2014-08-04 13:00,2014-08-10 13:00,2015-06-20 15:00,2015-06-25 15:00,,PT_Normal,,,,,wLXdZLefD0u2PZe2xUi2vA,+L3wvy6DTE2IXdGFQANExA,,,N,0,0,,,2014-04-13 07:21,2014-04-14 16:04,admin,admin,
2733,142830,6971,40024,7842,0,N,N,N,CP_Phys,TT_Task,DT_FixedDrtn,TK_NotStart,CZA-TK-3208-1940,Tank Handover,8386,2742,1230,20,0,210.131896,210.131896,20,0,0,0,,,,2015-06-25 15:00,2015-06-28 15:00,,2014-08-10 13:00,2014-08-12 13:00,2014-08-10 13:00,2014-08-12 13:00,2014-08-10 13:00,2014-08-12 13:00,2015-06-25 15:00,2015-06-28 15:00,,PT_Normal,,,,,LU++VIL+4ka2UVCILzj56g,FPNuwbdyH0iOm4BQB6zFeg,,,N,0,0,,,2014-04-13 07:21,2014-04-14 16:04,admin,admin,
2734,142831,6971,40025,7842,0,N,N,N,CP_Phys,TT_Task,DT_FixedDrtn,TK_NotStart,CZA-TK-3208-1200,Cutting of Annular,8491,2906,0,10,0,0,0,10,0,0,0,,,,2014-12-02 13:00,2014-12-03 13:00,,2013-12-29 07:00,2013-12-29 17:00,2013-12-29 07:00,2013-12-29 17:00,2013-12-29 07:00,2013-12-29 17:00,2014-12-02 13:00,2014-12-03 13:00,,PT_Normal,,,,,pYahZT+fOEm9oq8CgFCZ/A,zChqkYArEUK39yP5aMfJpw,,,N,0,0,,,2014-04-13 07:21,2014-04-14 17:03,admin,admin,
2735,142832,6971,40025,7842,0,N,N,N,CP_Phys,TT_Task,DT_FixedDrtn,TK_NotStart,CZA-TK-3208-1210,Cutting of Bottom Plates,8491,3838,0,10,0,220.947,220.947,10,0,0,0,,,,2015-03-21 15:00,2015-03-22 15:00,,2013-12-29 07:00,2013-12-29 17:00,2013-12-29 07:00,2013-12-29 17:00,2013-12-29 07:00,2013-12-29 17:00,2015-03-21 15:00,2015-03-22 15:00,,PT_Normal,,,,,3hBG3btuB0STgugiL9lY1A,F8+ZRrS9eUuMenVbEcNCJw,,,N,0,0,,,2014-04-13 07:21,2014-04-14 17:03,admin,admin,
2736,142833,6971,40025,7842,0,N,N,N,CP_Phys,TT_Task,DT_FixedDrtn,TK_NotStart,CZA-TK-3208-1220,"Cutting, Bevelling and Rolling No.1",8491,3838,0,10,0,199.236,199.236,10,0,0,0,,,,2015-03-22 15:00,2015-03-23 15:00,,2013-12-30 07:00,2013-12-30 17:00,2013-12-30 07:00,2013-12-30 17:00,2013-12-30 07:00,2013-12-30 17:00,2015-03-22 15:00,2015-03-23 15:00,,PT_Normal,,,,,WxWh7tlllkOJUqCRMkJYMQ,2cnKzR9H3kmhNJrILKHgMw,,,N,0,0,,,2014-04-13 07:21,2014-04-14 17:03,admin,admin,
2737,142834,6971,40025,7842,0,N,N,N,CP_Phys,TT_Task,DT_FixedDrtn,TK_NotStart,CZA-TK-3208-1230,"Cutting, Bevelling and Rolling No.2",8491,3838,0,10,0,34.44,34.44,10,0,0,0,,,,2015-03-23 15:00,2015-03-24 15:00,,2013-12-31 07:00,2013-12-31 17:00,2013-12-31 07:00,2013-12-31 17:00,2013-12-31 07:00,2013-12-31 17:00,2015-03-23 15:00,2015-03-24 15:00,,PT_Normal,,,,,u5DMoW6YCk+NUd8mJ4b4Sg,umvZslUqg0Gcq657+c7rOg,,,N,0,0,,,2014-04-13 07:21,2014-04-14 17:03,admin,admin,
2738,142835,6971,40025,7842,0,N,N,N,CP_Phys,TT_Task,DT_FixedDrtn,TK_NotStart,CZA-TK-3208-1240,"Cutting, Fit-up and Welding of Shell Nozzles, Manholes and Other Appurtances",8491,3838,0,40,0,0,0,40,0,0,0,,,,2015-03-24 15:00,2015-03-29 15:00,,2014-01-01 07:00,2014-01-05 17:00,2014-01-01 07:00,2014-01-05 17:00,2014-01-01 07:00,2014-01-05 17:00,2015-03-24 15:00,2015-03-29 15:00,,PT_Normal,,,,,ZWcD7rbll0mVLO5o+DimuQ,LlALwlev7ECJY90jw0nw/Q,,,N,0,0,,,2014-04-13 07:21,2014-04-14 17:03,admin,admin,
2739,142836,6971,40025,7842,0,N,N,N,CP_Phys,TT_Task,DT_FixedDrtn,TK_NotStart,CZA-TK-3208-1250,"Cutting, Bevelling & Rolling of Shell No.3",8491,3838,0,10,0,144.1965,144.1965,10,0,0,0,,,,2015-03-29 15:00,2015-03-30 15:00,,2014-01-06 07:00,2014-01-06 17:00,2014-01-06 07:00,2014-01-06 17:00,2014-01-06 07:00,2014-01-06 17:00,2015-03-29 15:00,2015-03-30 15:00,,PT_Normal,,,,,MJ+6c3wuHUGKcMvcpfwQlA,D3vU/L/HV0e7eH+66dzpnA,,,N,0,0,,,2014-04-13 07:21,2014-04-14 17:03,admin,admin,
2740,142837,6971,40025,7842,0,N,N,N,CP_Phys,TT_Task,DT_FixedDrtn,TK_NotStart,CZA-TK-3208-1290,"Cutting, Bevelling & Rolling of Shell No.4",8491,3838,0,10,0,30.12,30.12,10,0,0,0,,,,2015-03-30 15:00,2015-03-31 15:00,,2014-01-07 07:00,2014-01-07 17:00,2014-01-07 07:00,2014-01-07 17:00,2014-01-07 07:00,2014-01-07 17:00,2015-03-30 15:00,2015-03-31 15:00,,PT_Normal,,,,,xcwUc29UtkGIku6XZdaV7w,vhoAPbytVkS+fF0CZuUPzg,,,N,0,0,,,2014-04-13 07:21,2014-04-14 17:03,admin,admin,
2741,142838,6971,40025,7842,0,N,N,N,CP_Phys,TT_Task,DT_FixedDrtn,TK_NotStart,CZA-TK-3208-1300,"Cutting, Bevelling & Rolling of Shell No.5",8491,3838,0,10,0,123.6,123.6,10,0,0,0,,,,2015-03-30 15:00,2015-03-31 15:00,,2014-01-07 07:00,2014-01-07 17:00,2014-01-07 07:00,2014-01-07 17:00,2014-01-07 07:00,2014-01-07 17:00,2015-03-30 15:00,2015-03-31 15:00,,PT_Normal,,,,,yAzX8R9PI0CgzRCHeTrnrA,4d5TDgkgzkaCK2Sw47jmXg,,,N,0,0,,,2014-04-13 07:21,2014-04-14 17:03,admin,admin,
2742,142839,6971,40025,7842,0,N,N,N,CP_Phys,TT_Task,DT_FixedDrtn,TK_NotStart,CZA-TK-3208-1310,"Cutting, Bevelling & Rolling of Shell No.6",8491,3838,0,10,0,76.7295,76.7295,10,0,0,0,,,,2015-03-31 15:00,2015-04-01 15:00,,2014-01-08 07:00,2014-01-08 17:00,2014-01-08 07:00,2014-01-08 17:00,2014-01-08 07:00,2014-01-08 17:00,2015-03-31 15:00,2015-04-01 15:00,,PT_Normal,,,,,rhNCybqh5U6Wui/HKU/c/g,1QR07FZcu0Wgt7CQFK2XAA,,,N,0,0,,,2014-04-13 07:21,2014-04-14 17:03,admin,admin,
2743,142840,6971,40025,7842,0,N,N,N,CP_Phys,TT_Task,DT_FixedDrtn,TK_NotStart,CZA-TK-3208-1320,"Cutting, Bevelling & Rolling of Shell No.7",8491,3838,0,10,0,295.083,295.083,10,0,0,0,,,,2015-03-31 15:00,2015-04-01 15:00,,2014-01-08 07:00,2014-01-08 17:00,2014-01-08 07:00,2014-01-08 17:00,2014-01-08 07:00,2014-01-08 17:00,2015-03-31 15:00,2015-04-01 15:00,,PT_Normal,,,,,9v7oc2SDNUK3iUBLMywT1A,VeFcx0SfUEu0Kk2PtBqLWQ,,,N,0,0,,,2014-04-13 07:21,2014-04-14 17:03,admin,admin,
2744,142841,6971,40025,7842,0,N,N,N,CP_Phys,TT_Task,DT_FixedDrtn,TK_NotStart,CZA-TK-3208-1330,"Cutting, Fit-up and Welding Curb Angle",8491,3838,0,20,0,31.29567,31.29567,20,0,0,0,,,,2015-04-01 15:00,2015-04-04 15:00,,2014-01-09 07:00,2014-01-11 17:00,2014-01-09 07:00,2014-01-11 17:00,2014-01-09 07:00,2014-01-11 17:00,2015-04-01 15:00,2015-04-04 15:00,,PT_Normal,,,,,P+lZ2x/fOUGGabTIyxMB+g,HkL5gYw8K0G7Nl1pwL7DPQ,,,N,0,0,,,2014-04-13 07:21,2014-04-14 17:03,admin,admin,
2745,142842,6971,40025,7842,0,N,N,N,CP_Phys,TT_Task,DT_FixedDrtn,TK_NotStart,CZA-TK-3208-1340,"Cutting, Fit-up and Welding of Roof Structure",8491,3838,0,50,0,0,0,50,0,0,0,,,,2015-04-04 15:00,2015-04-09 15:00,,2014-01-12 07:00,2014-01-16 17:00,2014-01-12 07:00,2014-01-16 17:00,2014-01-12 07:00,2014-01-16 17:00,2015-04-04 15:00,2015-04-09 15:00,,PT_Normal,,,,,YOwdMNM3h0O5XLR0eRw3wA,Ee7DGCut30iGJ/baVIpTsg,,,N,0,0,,,2014-04-13 07:21,2014-04-14 17:03,admin,admin,
2746,142843,6971,40025,7842,0,N,N,N,CP_Phys,TT_Task,DT_FixedDrtn,TK_NotStart,CZA-TK-3208-1350,"Cutting,Fit-up and Welding of Roof Plates",8491,3838,0,10,0,200.0343,200.0343,10,0,0,0,,,,2015-04-09 15:00,2015-04-11 15:00,,2014-01-18 07:00,2014-01-18 17:00,2014-01-18 07:00,2014-01-18 17:00,2014-01-18 07:00,2014-01-18 17:00,2015-04-09 15:00,2015-04-11 15:00,,PT_Normal,,,,,8yO8nA8U3UeQ+KpOAPeyvA,DN3Hhe/bEU6vZf58ipv4Ww,,,N,0,0,,,2014-04-13 07:21,2014-04-14 17:03,admin,admin,
2747,142844,6971,40025,7842,0,N,N,N,CP_Phys,TT_Task,DT_FixedDrtn,TK_NotStart,CZA-TK-3208-1360,"Cutting, Fit-up and Welding of Roof Platform, Gratings and Handrails",8491,3838,0,70,0,0,0,70,0,0,0,,,,2015-04-11 15:00,2015-04-19 15:00,,2014-01-19 07:00,2014-01-26 17:00,2014-01-19 07:00,2014-01-26 17:00,2014-01-19 07:00,2014-01-26 17:00,2015-04-11 15:00,2015-04-19 15:00,,PT_Normal,,,,,RbkiuL23q0yVvGPSzlO+JA,149FOsJwv0e9gJg6JPJ4wA,,,N,0,0,,,2014-04-13 07:21,2014-04-14 17:03,admin,admin,
2748,142845,6971,40025,7842,0,N,N,N,CP_Phys,TT_Task,DT_FixedDrtn,TK_NotStart,CZA-TK-3208-1370,"Cutting, Fit-up & Welding of Roof Nozzles,Manholes and Other Appurtances",8491,3838,0,40,0,81.72,81.72,40,0,0,0,,,,2015-04-19 15:00,2015-04-23 15:00,,2014-01-27 07:00,2014-01-30 17:00,2014-01-27 07:00,2014-01-30 17:00,2014-01-27 07:00,2014-01-30 17:00,2015-04-19 15:00,2015-04-23 15:00,,PT_Normal,,,,,VjWRzlfOR0qzTs9iOSETvg,YAThotFEhES35iiKa5S/Ig,,,N,0,0,,,2014-04-13 07:21,2014-04-14 17:03,admin,admin,
2749,142846,6971,40025,7842,0,N,N,N,CP_Phys,TT_Task,DT_FixedDrtn,TK_NotStart,CZA-TK-3208-1380,"Cutting, Fit-up and Welding of Stairway Platform, Gratings and Handrails",8491,3838,1096,70,0,0,0,70,0,0,0,,,,2015-04-23 15:00,2015-05-02 15:00,,2014-02-01 07:00,2014-02-08 17:00,2014-02-01 07:00,2014-02-08 17:00,2014-02-01 07:00,2014-02-08 17:00,2015-04-23 15:00,2015-05-02 15:00,,PT_Normal,,,,,AobCAEtiG0eTxwsJAkenWA,atuMUlkIG02mS2g994sLvQ,,,N,0,0,,,2014-04-13 07:21,2014-04-14 17:03,admin,admin,
2750,142847,6971,40026,7842,0,N,N,N,CP_Phys,TT_Mile,DT_FixedDrtn,TK_NotStart,CZA-TK-3208-1390,Foundation Takeover from Client,,0,0,0,0,0,0,0,0,0,0,2014-03-23 00:00,,,2014-03-22 17:00,2014-03-22 17:00,,2014-03-23 07:00,2014-03-23 07:00,2014-03-23 07:00,2014-03-23 07:00,2014-03-23 07:00,2014-03-23 07:00,2014-03-22 17:00,2014-03-22 17:00,CS_MSO,PT_Normal,,,,,I7aA46JTrkqwLaOQCne0kQ,8ou1F/wxHEynzoWP5HmhHg,,,N,0,0,,,2014-04-13 07:21,2014-04-13 07:42,admin,admin,
2751,142848,6971,40027,7842,0,N,N,N,CP_Phys,TT_Task,DT_FixedDrtn,TK_NotStart,CZA-TK-3208-1910,"Filling, Holding and Transfering of Water",8386,2742,0,90,0,1050.659479,1050.659479,90,0,0,0,,,,2015-05-31 15:00,2015-06-10 15:00,,2014-07-15 13:00,2014-07-26 13:00,2014-07-15 13:00,2014-07-26 13:00,2014-07-15 13:00,2014-07-26 13:00,2015-05-31 15:00,2015-06-10 15:00,,PT_Normal,,,,,zYsswW6e7kutxEA4MT76vA,ZX7vexf4A06MQi8IGQ8JWA,,,N,0,0,,,2014-04-13 07:21,2014-04-14 16:04,admin,admin,
2752,142849,6971,40029,7842,0,N,N,N,CP_Phys,TT_Mile,DT_FixedDrtn,TK_NotStart,CZA-TK-2311-1550,Foundation Takeover From Client,,0,0,0,0,0,0,0,0,0,0,2014-03-23 00:00,,,2014-03-22 17:00,2014-03-22 17:00,,2014-03-23 07:00,2014-03-23 07:00,2014-03-23 07:00,2014-03-23 07:00,2014-03-23 07:00,2014-03-23 07:00,2014-03-22 17:00,2014-03-22 17:00,CS_MSO,PT_Normal,,,,,T7RZQrsF+Uq3rvydck/1Aw,dHNGYk3a5U2SfXUCDTm9Tg,,,N,0,0,,,2014-04-13 07:21,2014-04-13 07:42,admin,admin,
2753,142850,6971,40030,7842,0,N,N,N,CP_Phys,TT_Task,DT_FixedDrtn,TK_NotStart,CZA-TK-2311-2130,"Filling, Holding and Transfer of Water",8382,1512,0,200,0,5387.91314,5387.91314,200,0,0,0,,,,2015-04-22 15:00,2015-05-16 15:00,,2014-10-28 13:00,2014-11-20 13:00,2014-10-28 13:00,2014-11-20 13:00,2014-10-28 13:00,2014-11-20 13:00,2015-04-22 15:00,2015-05-16 15:00,,PT_Normal,,,,,af5GRxcJCUaSe+aWiqS2Qw,OC+snr2B3kazQIAN98YYjA,,,N,0,0,,,2014-04-13 07:21,2014-04-14 16:04,admin,admin,
2754,142851,6971,40031,7842,0,N,N,N,CP_Phys,TT_Task,DT_FixedDrtn,TK_NotStart,CZA-TK-2311-1380,Cutting of Annular Plate,8487,2906,0,10,0,396,396,10,0,0,0,,,,2014-11-27 13:00,2014-11-29 13:00,,2013-12-24 07:00,2013-12-24 17:00,2013-12-24 07:00,2013-12-24 17:00,2013-12-24 07:00,2013-12-24 17:00,2014-11-27 13:00,2014-11-29 13:00,,PT_Normal,,,,,NF0Qu70aOkyLUQlGbuk3rA,xUFW6xWMBEmnEmX4oot5wg,,,N,0,0,,,2014-04-13 07:21,2014-04-14 17:03,admin,admin,
2755,142852,6971,40031,7842,0,N,N,N,CP_Phys,TT_Task,DT_FixedDrtn,TK_NotStart,CZA-TK-2311-1390,Cutting of Bottom Plates,8487,3620,0,10,0,1164.27,1164.27,10,0,0,0,,,,2015-02-21 07:00,2015-02-21 17:00,,2013-12-25 07:00,2013-12-25 17:00,2013-12-25 07:00,2013-12-25 17:00,2013-12-25 07:00,2013-12-25 17:00,2015-02-21 07:00,2015-02-21 17:00,,PT_Normal,,,,,WaYKsxapM0i/s8robgoYuA,72ve7bc4vUqBVdSBJrd+gw,,,N,0,0,,,2014-04-13 07:21,2014-04-14 17:03,admin,admin,
2756,142853,6971,40031,7842,0,N,N,N,CP_Phys,TT_Task,DT_FixedDrtn,TK_NotStart,CZA-TK-2311-1400,"Cutting, Bevelling & Rolling of Shell No.7",8487,3620,0,10,0,340.32,340.32,10,0,0,0,,,,2015-02-22 07:00,2015-02-22 17:00,,2013-12-26 07:00,2013-12-26 17:00,2013-12-26 07:00,2013-12-26 17:00,2013-12-26 07:00,2013-12-26 17:00,2015-02-22 07:00,2015-02-22 17:00,,PT_Normal,,,,,W0ZQs2FeX0SAk7/tum/hJA,ykTWHGFhnkCZ8/+wnUvBGA,,,N,0,0,,,2014-04-13 07:21,2014-04-14 17:03,admin,admin,
2757,142854,6971,40031,7842,0,N,N,N,CP_Phys,TT_Task,DT_FixedDrtn,TK_NotStart,CZA-TK-2311-1410,"Cutting, Fit-up and Rolling of Shell No.8",8487,3620,0,10,0,232.725,232.725,10,0,0,0,,,,2015-02-23 07:00,2015-02-23 17:00,,2013-12-28 07:00,2013-12-28 17:00,2013-12-28 07:00,2013-12-28 17:00,2013-12-28 07:00,2013-12-28 17:00,2015-02-23 07:00,2015-02-23 17:00,,PT_Normal,,,,,CpoUCccVA0ONXM2qYlNk0A,mLW506eH9EWW7j4Q+E17QQ,,,N,0,0,,,2014-04-13 07:21,2014-04-14 17:03,admin,admin,
2758,142855,6971,40031,7842,0,N,N,N,CP_Phys,TT_Task,DT_FixedDrtn,TK_NotStart,CZA-TK-2311-1420,Cutting of Compression Ring & Stairway,8487,3620,0,50,0,0,0,50,0,0,0,,,,2015-02-24 15:00,2015-03-02 15:00,,2013-12-29 15:00,2014-01-04 15:00,2013-12-29 15:00,2014-01-04 15:00,2013-12-29 15:00,2014-01-04 15:00,2015-02-24 15:00,2015-03-02 15:00,,PT_Normal,,,,,1DBcQ/UjDkukL+muGJk8SQ,XAhXxtfN7Emjl4l0k5UIhQ,,,N,0,0,,,2014-04-13 07:21,2014-04-14 17:03,admin,admin,
2759,142856,6971,40031,7842,0,N,N,N,CP_Phys,TT_Task,DT_FixedDrtn,TK_NotStart,CZA-TK-2311-1430,"Cutting, Fit-up and Welding Roof Structure",8487,3620,0,40,0,1154.6346,1154.6346,40,0,0,0,,,,2015-02-24 15:00,2015-03-01 15:00,,2013-12-29 15:00,2014-01-02 15:00,2013-12-29 15:00,2014-01-02 15:00,2013-12-29 15:00,2014-01-02 15:00,2015-02-24 15:00,2015-03-01 15:00,,PT_Normal,,,,,6HsAMneXyEeOIsjeHbGOmw,VTVA2nlzq0KvbY3Cv1gIzQ,,,N,0,0,,,2014-04-13 07:21,2014-04-14 17:03,admin,admin,
2760,142857,6971,40031,7842,0,N,N,N,CP_Phys,TT_Task,DT_FixedDrtn,TK_NotStart,CZA-TK-2311-1440,Cutting of Roof Plates,8487,3620,0,30,0,1139.343,1139.343,30,0,0,0,,,,2015-03-01 15:00,2015-03-04 15:00,,2014-01-02 15:00,2014-01-06 15:00,2014-01-02 15:00,2014-01-06 15:00,2014-01-02 15:00,2014-01-06 15:00,2015-03-01 15:00,2015-03-04 15:00,,PT_Normal,,,,,5iMr5YALuU62qzff7mFPMg,ecX7hSQ8eE+CZR+1Jky/Lw,,,N,0,0,,,2014-04-13 07:21,2014-04-14 17:03,admin,admin,
2761,142858,6971,40031,7842,0,N,N,N,CP_Phys,TT_Task,DT_FixedDrtn,TK_NotStart,CZA-TK-2311-1450,"Cutting, Fit-up, Welding of Roof Nozzles, Manholes and Other Appurtances",8487,3620,0,60,0,0,0,60,0,0,0,,,,2015-03-04 15:00,2015-03-11 15:00,,2014-01-06 15:00,2014-01-13 15:00,2014-01-06 15:00,2014-01-13 15:00,2014-01-06 15:00,2014-01-13 15:00,2015-03-04 15:00,2015-03-11 15:00,,PT_Normal,,,,,CQ5qHLkjz0mRSIxU8JHZHg,T8pwEGy960S3wGM4xsl8pg,,,N,0,0,,,2014-04-13 07:21,2014-04-14 17:03,admin,admin,
2762,142859,6971,40031,7842,0,N,N,N,CP_Phys,TT_Task,DT_FixedDrtn,TK_NotStart,CZA-TK-2311-1460,"Cutting, Fit-up and Welding of Roof Platform, Gratings and Handrails",8487,3620,0,100,0,0,0,100,0,0,0,,,,2015-03-11 15:00,2015-03-23 15:00,,2014-01-13 15:00,2014-01-25 15:00,2014-01-13 15:00,2014-01-25 15:00,2014-01-13 15:00,2014-01-25 15:00,2015-03-11 15:00,2015-03-23 15:00,,PT_Normal,,,,,qCqeViEjbUyU8oI7i9sLFA,Dod1MSrgUkK7TkQs3JUO5A,,,N,0,0,,,2014-04-13 07:21,2014-04-14 17:03,admin,admin,
2763,142860,6971,40031,7842,0,N,N,N,CP_Phys,TT_Task,DT_FixedDrtn,TK_NotStart,CZA-TK-2311-1470,"Cutting, Bevelling and Rolling Shell No.6",8487,3620,0,10,0,453.81,453.81,10,0,0,0,,,,2015-03-23 15:00,2015-03-24 15:00,,2014-01-25 15:00,2014-01-26 15:00,2014-01-25 15:00,2014-01-26 15:00,2014-01-25 15:00,2014-01-26 15:00,2015-03-23 15:00,2015-03-24 15:00,,PT_Normal,,,,,f5d2gNXiXE2JJZYsBJWZaw,GdakhXdXUUK0VHj1OheZ3Q,,,N,0,0,,,2014-04-13 07:21,2014-04-14 17:03,admin,admin,
2764,142861,6971,40031,7842,0,N,N,N,CP_Phys,TT_Task,DT_FixedDrtn,TK_NotStart,CZA-TK-2311-1480,"Cutting, Bevelling and Rolling Shell No.5",8487,3620,0,10,0,567,567,10,0,0,0,,,,2015-03-24 15:00,2015-03-25 15:00,,2014-01-26 15:00,2014-01-27 15:00,2014-01-26 15:00,2014-01-27 15:00,2014-01-26 15:00,2014-01-27 15:00,2015-03-24 15:00,2015-03-25 15:00,,PT_Normal,,,,,dYZ/28sbSEKOmmz/9n0Anw,rLccmrUObEeJ8Pc0IhUFww,,,N,0,0,,,2014-04-13 07:21,2014-04-14 17:03,admin,admin,
2765,142862,6971,40031,7842,0,N,N,N,CP_Phys,TT_Task,DT_FixedDrtn,TK_NotStart,CZA-TK-2311-1490,"Cutting, Bevelling and Rolling Shell No.4",8487,3620,0,10,0,680.52,680.52,10,0,0,0,,,,2015-03-25 15:00,2015-03-26 15:00,,2014-01-27 15:00,2014-01-28 15:00,2014-01-27 15:00,2014-01-28 15:00,2014-01-27 15:00,2014-01-28 15:00,2015-03-25 15:00,2015-03-26 15:00,,PT_Normal,,,,,9mP0TKj0+U+l4ciOpJzZNA,4oa34qNfwkSl4pdwu+8ERA,,,N,0,0,,,2014-04-13 07:21,2014-04-14 17:03,admin,admin,
2766,142863,6971,40031,7842,0,N,N,N,CP_Phys,TT_Task,DT_FixedDrtn,TK_NotStart,CZA-TK-2311-1500,"Cutting, Bevelling and Rolling Shell No.3",8487,3620,0,10,0,794.04,794.04,10,0,0,0,,,,2015-03-26 15:00,2015-03-28 15:00,,2014-01-28 15:00,2014-01-29 15:00,2014-01-28 15:00,2014-01-29 15:00,2014-01-28 15:00,2014-01-29 15:00,2015-03-26 15:00,2015-03-28 15:00,,PT_Normal,,,,,EzBn0kb1jEOJx7gZVKUADw,ZtAkjK30FkaZ1oJbpj1zcA,,,N,0,0,,,2014-04-13 07:21,2014-04-14 17:03,admin,admin,
2767,142864,6971,40031,7842,0,N,N,N,CP_Phys,TT_Task,DT_FixedDrtn,TK_NotStart,CZA-TK-2311-1520,"Cutting, Bevelling and Rolling Shell No.1",8487,3620,0,10,0,1529.7405,1529.7405,10,0,0,0,,,,2015-03-29 15:00,2015-03-30 15:00,,2014-01-30 15:00,2014-02-01 15:00,2014-01-30 15:00,2014-02-01 15:00,2014-01-30 15:00,2014-02-01 15:00,2015-03-29 15:00,2015-03-30 15:00,,PT_Normal,,,,,2jzlAdUNEkq1bGEWioE1Iw,HT18WGwKBk6pK+8JbIsfSg,,,N,0,0,,,2014-04-13 07:21,2014-04-14 17:03,admin,admin,
2768,142865,6971,40031,7842,0,N,N,N,CP_Phys,TT_Task,DT_FixedDrtn,TK_NotStart,CZA-TK-2311-1530,"Cutting, Fit-up & Welding of Shell Nozzles, Manholes and other Appurtanances",8487,3620,0,60,0,117.18,117.18,60,0,0,0,,,,2015-03-30 15:00,2015-04-06 15:00,,2014-02-01 15:00,2014-02-08 15:00,2014-02-01 15:00,2014-02-08 15:00,2014-02-01 15:00,2014-02-08 15:00,2015-03-30 15:00,2015-04-06 15:00,,PT_Normal,,,,,VhXYxr0UmEqJHB/x6GSVVA,B9Of16Byp0CbSNVVNuoSnQ,,,N,0,0,,,2014-04-13 07:21,2014-04-14 17:03,admin,admin,
2769,142866,6971,40031,7842,0,N,N,N,CP_Phys,TT_Task,DT_FixedDrtn,TK_NotStart,CZA-TK-2311-1540,"Cutting, Fit-up and Welding of Stairway Platform, Gratings and Handrails",8487,3620,2108,60,0,0,0,60,0,0,0,,,,2015-04-04 15:00,2015-04-11 15:00,,2014-02-05 15:00,2014-02-12 15:00,2014-02-05 15:00,2014-02-12 15:00,2014-02-05 15:00,2014-02-12 15:00,2015-04-04 15:00,2015-04-11 15:00,,PT_Normal,,,,,8PkVVJqPt025dKMaxjdESg,QzHaRdyLvEyMsKQCq+Suig,,,N,0,0,,,2014-04-13 07:21,2014-04-14 17:03,admin,admin,
2770,142867,6971,40031,7842,0,N,N,N,CP_Phys,TT_Task,DT_FixedDrtn,TK_NotStart,CZA-TK-2311-1510,"Cutting, Bevelling and Rolling Shell No.2",8487,3620,0,10,0,1167.324,1167.324,10,0,0,0,,,,2015-03-28 15:00,2015-03-29 15:00,,2014-01-29 15:00,2014-01-30 15:00,2014-01-29 15:00,2014-01-30 15:00,2014-01-29 15:00,2014-01-30 15:00,2015-03-28 15:00,2015-03-29 15:00,,PT_Normal,,,,,5ViurOOA1kW3WqyUsvn6Ow,vRzY12TMukuDN7bkQcw8Gw,,,N,0,0,,,2014-04-13 07:21,2014-04-14 17:03,admin,admin,
2771,142868,6971,40104,7842,0,N,N,N,CP_Phys,TT_Task,DT_FixedDrtn,TK_NotStart,CZA-TK-2311-2140,"Blasting and Painting of Shell, Bottom and Roof (Inside and Outside)",8382,1592,0,220,0,3232.747884,3232.747884,220,0,0,0,,,,2015-05-25 15:00,2015-06-20 15:00,,2014-11-20 13:00,2014-12-16 13:00,2014-11-20 13:00,2014-12-16 13:00,2014-11-20 13:00,2014-12-16 13:00,2015-05-25 15:00,2015-06-20 15:00,,PT_Normal,,,,,plUpBWcS406DC6fd4WCvqQ,TaQCeS3kXkW0fiCX4nKgBg,,,N,0,0,,,2014-04-13 07:21,2014-04-14 16:04,admin,admin,
2772,142869,6971,40010,7842,0,N,N,N,CP_Phys,TT_Task,DT_FixedDrtn,TK_NotStart,CZA-TK-2311-2150,Tank Calibration,8382,1592,0,50,0,1077.582628,1077.582628,50,0,0,0,,,,2015-06-20 15:00,2015-06-25 15:00,,2014-12-16 13:00,2014-12-22 13:00,2014-12-16 13:00,2014-12-22 13:00,2014-12-16 13:00,2014-12-22 13:00,2015-06-20 15:00,2015-06-25 15:00,,PT_Normal,,,,,NtUVCOEsyEmWbhy1VDtyVQ,rFX8EB58Gku05bF84MmFTw,,,N,0,0,,,2014-04-13 07:21,2014-04-14 16:04,admin,admin,
2773,142870,6971,40010,7842,0,N,N,N,CP_Phys,TT_Task,DT_FixedDrtn,TK_NotStart,CZA-TK-2311-2160,Tank Handover,8382,1592,80,20,0,1077.582628,1077.582628,20,0,0,0,,,,2015-06-25 15:00,2015-06-28 15:00,,2014-12-22 13:00,2014-12-24 13:00,2014-12-22 13:00,2014-12-24 13:00,2014-12-22 13:00,2014-12-24 13:00,2015-06-25 15:00,2015-06-28 15:00,,PT_Normal,,,,,ck4ADXx7l0Of/H4C8VefFw,lsqAsYylqkO06bFQVZTNeQ,,,N,0,0,,,2014-04-13 07:21,2014-04-14 16:04,admin,admin,
2774,142871,6971,40453,7842,0,N,N,N,CP_Phys,TT_Task,DT_FixedDrtn,TK_NotStart,CZA-TK-2311-1680,"Cutting, Installation and Fit-up",8382,1512,0,20,0,51.298449,51.298449,20,20,0,20,,,,2014-11-01 15:00,2014-11-03 15:00,,2014-05-08 13:00,2014-05-11 13:00,2014-05-08 13:00,2014-05-11 13:00,2014-05-08 13:00,2014-05-11 13:00,2014-11-01 15:00,2014-11-03 15:00,,PT_Normal,,,,,0IjxMzn420mK1eo5FDytrg,UN6izo17Zk+IYspVRB5rSA,,,N,0,0,,,2014-04-13 07:21,2014-04-14 16:04,admin,admin,
2775,142872,6971,40453,7842,0,N,N,N,CP_Phys,TT_Task,DT_FixedDrtn,TK_NotStart,CZA-TK-2311-1690,Welding,8382,1512,0,40,0,64.123061,64.123061,40,40,0,40,,,,2014-11-03 15:00,2014-11-08 15:00,,2014-05-11 13:00,2014-05-15 13:00,2014-05-11 13:00,2014-05-15 13:00,2014-05-11 13:00,2014-05-15 13:00,2014-11-03 15:00,2014-11-08 15:00,,PT_Normal,,,,,26IAhtFddk6zoPK/1rIzrw,k/zr2BgBzUiQcTjyg7TsQA,,,N,0,0,,,2014-04-13 07:21,2014-04-14 16:04,admin,admin,
2776,142873,6971,40453,7842,0,N,N,N,CP_Phys,TT_Task,DT_FixedDrtn,TK_NotStart,CZA-TK-2311-1700,Inspection,8382,1512,0,60,0,12.824612,12.824612,60,0,0,0,,,,2014-11-01 15:00,2014-11-08 15:00,,2014-05-08 13:00,2014-05-15 13:00,2014-05-08 13:00,2014-05-15 13:00,2014-05-08 13:00,2014-05-15 13:00,2014-11-01 15:00,2014-11-08 15:00,,PT_Normal,,,,,tSkT7KlNikS0J2pSLYFahg,rfyRKYVZuk6TX2p5LfTWfA,,,N,0,0,,,2014-04-13 07:21,2014-04-14 16:04,admin,admin,
2777,142874,6971,40454,7842,0,N,N,N,CP_Phys,TT_Task,DT_FixedDrtn,TK_NotStart,CZA-TK-2311-1710,Erection and Fit-up,8382,1512,0,20,0,0,0,20,20,0,20,,,,2014-11-08 15:00,2014-11-10 15:00,,2014-05-15 13:00,2014-05-18 13:00,2014-05-15 13:00,2014-05-18 13:00,2014-05-15 13:00,2014-05-18 13:00,2014-11-08 15:00,2014-11-10 15:00,,PT_Normal,,,,,yE/Hvcx0G0Sr1xZM2ZHF7Q,FgvAZdDLekyLtLv9FACZAg,,,N,0,0,,,2014-04-13 07:21,2014-04-14 16:04,admin,admin,
2778,142875,6971,40454,7842,0,N,N,N,CP_Phys,TT_Task,DT_FixedDrtn,TK_NotStart,CZA-TK-2311-1720,Welding,8382,1512,0,40,0,0,0,40,40,0,40,,,,2014-11-10 15:00,2014-11-15 15:00,,2014-05-18 13:00,2014-05-22 13:00,2014-05-18 13:00,2014-05-22 13:00,2014-05-18 13:00,2014-05-22 13:00,2014-11-10 15:00,2014-11-15 15:00,,PT_Normal,,,,,wHsxeS9XT0On/aNzC0DC0Q,z89kFCPpl0KNeHzDAinpjA,,,N,0,0,,,2014-04-13 07:21,2014-04-14 16:04,admin,admin,
2779,142876,6971,40454,7842,0,N,N,N,CP_Phys,TT_Task,DT_FixedDrtn,TK_NotStart,CZA-TK-2311-1730,Inspection,8382,1512,0,60,0,0,0,60,0,0,0,,,,2014-11-08 15:00,2014-11-15 15:00,,2014-05-15 13:00,2014-05-22 13:00,2014-05-15 13:00,2014-05-22 13:00,2014-05-15 13:00,2014-05-22 13:00,2014-11-08 15:00,2014-11-15 15:00,,PT_Normal,,,,,83+SiXgmy0KXDHgF/GZcgw,i1M3oNHu/EyDL8IhPYeMyA,,,N,0,0,,,2014-04-13 07:21,2014-04-14 16:04,admin,admin,
2780,142877,6971,40455,7842,0,N,N,N,CP_Phys,TT_Task,DT_FixedDrtn,TK_NotStart,CZA-TK-2311-1740,Erection and Fit-up,8382,1512,0,40,0,505.469911,505.469911,40,40,0,40,,,,2014-11-15 15:00,2014-11-19 15:00,,2014-05-22 13:00,2014-05-27 13:00,2014-05-22 13:00,2014-05-27 13:00,2014-05-22 13:00,2014-05-27 13:00,2014-11-15 15:00,2014-11-19 15:00,,PT_Normal,,,,,XtQSb2MdnEi95JTjA89axg,mF021Mpf2k2olIF/XNeubQ,,,N,0,0,,,2014-04-13 07:21,2014-04-14 16:04,admin,admin,
2781,142878,6971,40455,7842,0,N,N,N,CP_Phys,TT_Task,DT_FixedDrtn,TK_NotStart,CZA-TK-2311-1750,Welding,8382,1512,0,120,0,631.837389,631.837389,120,120,0,120,,,,2014-11-19 15:00,2014-12-03 15:00,,2014-05-27 13:00,2014-06-10 13:00,2014-05-27 13:00,2014-06-10 13:00,2014-05-27 13:00,2014-06-10 13:00,2014-11-19 15:00,2014-12-03 15:00,,PT_Normal,,,,,7fFtcJRCC0ysVgSL7evM3w,HqptW1IBfEuA2runbt8B2w,,,N,0,0,,,2014-04-13 07:21,2014-04-14 16:04,admin,admin,
2782,142879,6971,40455,7842,0,N,N,N,CP_Phys,TT_Task,DT_FixedDrtn,TK_NotStart,CZA-TK-2311-1760,Inspection,8382,1512,0,160,0,126.367478,126.367478,160,0,0,0,,,,2014-11-15 15:00,2014-12-03 15:00,,2014-05-22 13:00,2014-06-10 13:00,2014-05-22 13:00,2014-06-10 13:00,2014-05-22 13:00,2014-06-10 13:00,2014-11-15 15:00,2014-12-03 15:00,,PT_Normal,,,,,B1kDonhxJ0mCviiWaTpGGg,MfaHARjT6ke5ZD6/y9UfVA,,,N,0,0,,,2014-04-13 07:21,2014-04-14 16:04,admin,admin,
2783,142880,6971,40456,7842,0,N,N,N,CP_Phys,TT_Task,DT_FixedDrtn,TK_NotStart,CZA-TK-2311-1770,Laying and Fit-up,8382,1512,0,20,0,498.775634,498.775634,20,20,0,20,,,,2014-12-03 15:00,2014-12-06 15:00,,2014-06-10 13:00,2014-06-12 13:00,2014-06-10 13:00,2014-06-12 13:00,2014-06-10 13:00,2014-06-12 13:00,2014-12-03 15:00,2014-12-06 15:00,,PT_Normal,,,,,USg//O+nBEepHORSf0Oowg,+TuHGZkbDkKrSUybTKhAzQ,,,N,0,0,,,2014-04-13 07:21,2014-04-14 16:04,admin,admin,
2784,142881,6971,40456,7842,0,N,N,N,CP_Phys,TT_Task,DT_FixedDrtn,TK_NotStart,CZA-TK-2311-1780,Welding,8382,1512,0,100,0,623.469543,623.469543,100,100,0,100,,,,2014-12-06 15:00,2014-12-17 15:00,,2014-06-12 13:00,2014-06-24 13:00,2014-06-12 13:00,2014-06-24 13:00,2014-06-12 13:00,2014-06-24 13:00,2014-12-06 15:00,2014-12-17 15:00,,PT_Normal,,,,,guJGRPVCNU+xRhJW3W576w,5tEVtzpeo0aCF/EqcZFcXA,,,N,0,0,,,2014-04-13 07:21,2014-04-14 16:04,admin,admin,
2785,142882,6971,40456,7842,0,N,N,N,CP_Phys,TT_Task,DT_FixedDrtn,TK_NotStart,CZA-TK-2311-1790,Inspection,8382,1512,0,120,0,124.693909,124.693909,120,0,0,0,,,,2014-12-03 15:00,2014-12-17 15:00,,2014-06-10 13:00,2014-06-24 13:00,2014-06-10 13:00,2014-06-24 13:00,2014-06-10 13:00,2014-06-24 13:00,2014-12-03 15:00,2014-12-17 15:00,,PT_Normal,,,,,vWQK/UvRAU6mf/4vPMxumw,YdkDWVAnJUujs8v9yyZE4Q,,,N,0,0,,,2014-04-13 07:21,2014-04-14 16:04,admin,admin,
2786,142883,6971,40248,7842,0,N,N,N,CP_Phys,TT_Task,DT_FixedDrtn,TK_NotStart,CZA-TK-2311-1560,Laying and Fit-up,8382,1512,0,10,0,173.358814,173.358814,10,10,0,10,,,,2014-09-16 15:00,2014-09-17 15:00,,2014-03-24 13:00,2014-03-25 13:00,2014-03-24 13:00,2014-03-25 13:00,2014-03-24 13:00,2014-03-25 13:00,2014-09-16 15:00,2014-09-17 15:00,,PT_Normal,,,,,aCdV0Tl+eECLibqZKtxbHg,7zOvc12RJUe7TlJdPFVq+Q,,,N,0,0,,,2014-04-13 07:21,2014-04-14 16:04,admin,admin,
2787,142884,6971,40248,7842,0,N,N,N,CP_Phys,TT_Task,DT_FixedDrtn,TK_NotStart,CZA-TK-2311-1570,Welding,8382,1512,0,40,0,216.698518,216.698518,40,40,0,40,,,,2014-09-17 15:00,2014-09-22 15:00,,2014-03-25 13:00,2014-03-30 13:00,2014-03-25 13:00,2014-03-30 13:00,2014-03-25 13:00,2014-03-30 13:00,2014-09-17 15:00,2014-09-22 15:00,,PT_Normal,,,,,ItVN+9m1EkOBbWuPiETbFA,PYjxdHFgVUCR9xIW417Esw,,,N,0,0,,,2014-04-13 07:21,2014-04-14 16:04,admin,admin,
2788,142885,6971,40248,7842,0,N,N,N,CP_Phys,TT_Task,DT_FixedDrtn,TK_NotStart,CZA-TK-2311-1580,Inspection,8382,1512,0,50,0,43.339704,43.339704,50,0,0,0,,,,2014-09-16 15:00,2014-09-22 15:00,,2014-03-24 13:00,2014-03-30 13:00,2014-03-24 13:00,2014-03-30 13:00,2014-03-24 13:00,2014-03-30 13:00,2014-09-16 15:00,2014-09-22 15:00,,PT_Normal,,,,,DlQeQwqO0UKhkqWhfVriPQ,fgswqvy8fUO8/lcRoBuiWQ,,,N,0,0,,,2014-04-13 07:21,2014-04-14 16:04,admin,admin,
2789,142886,6971,40458,7842,0,N,N,N,CP_Phys,TT_Task,DT_FixedDrtn,TK_NotStart,CZA-TK-2311-1590,Laying and Fit-up,8382,1512,0,40,0,509.688046,509.688046,40,40,0,40,,,,2014-09-22 15:00,2014-09-27 15:00,,2014-03-30 13:00,2014-04-03 13:00,2014-03-30 13:00,2014-04-03 13:00,2014-03-30 13:00,2014-04-03 13:00,2014-09-22 15:00,2014-09-27 15:00,,PT_Normal,,,,,Z5CWx6y8cUuW0jzC3D4dhQ,Byl/iWW2XkS9N+52inqatQ,,,N,0,0,,,2014-04-13 07:21,2014-04-14 16:04,admin,admin,
2790,142887,6971,40458,7842,0,N,N,N,CP_Phys,TT_Task,DT_FixedDrtn,TK_NotStart,CZA-TK-2311-1600,Welding,8382,1512,0,120,0,637.110058,637.110058,120,120,0,120,,,,2014-09-27 15:00,2014-10-11 15:00,,2014-04-03 13:00,2014-04-17 13:00,2014-04-03 13:00,2014-04-17 13:00,2014-04-03 13:00,2014-04-17 13:00,2014-09-27 15:00,2014-10-11 15:00,,PT_Normal,,,,,g+NahSuT7U2HzXZYsjk60A,NwFHcZD2REKBb4e83RoEtQ,,,N,0,0,,,2014-04-13 07:21,2014-04-14 16:04,admin,admin,
2791,142888,6971,40458,7842,0,N,N,N,CP_Phys,TT_Task,DT_FixedDrtn,TK_NotStart,CZA-TK-2311-1610,Inspection,8382,1512,0,160,0,127.422012,127.422012,160,0,0,0,,,,2014-09-22 15:00,2014-10-11 15:00,,2014-03-30 13:00,2014-04-17 13:00,2014-03-30 13:00,2014-04-17 13:00,2014-03-30 13:00,2014-04-17 13:00,2014-09-22 15:00,2014-10-11 15:00,,PT_Normal,,,,,uzx8zjyDi0SbuODE5Kargw,FNDm/7zDsUyuzAVQPwf9xw,,,N,0,0,,,2014-04-13 07:21,2014-04-14 16:04,admin,admin,
2792,142889,6971,40459,7842,0,N,N,N,CP_Phys,TT_Task,DT_FixedDrtn,TK_NotStart,CZA-TK-2311-1620,Erection and Fit-up,8382,1512,0,20,0,148.983514,148.983514,20,20,0,20,,,,2014-10-11 15:00,2014-10-13 15:00,,2014-04-17 13:00,2014-04-20 13:00,2014-04-17 13:00,2014-04-20 13:00,2014-04-17 13:00,2014-04-20 13:00,2014-10-11 15:00,2014-10-13 15:00,,PT_Normal,,,,,K56Kq5R+A0Cgk3MQP9Q+Iw,DLyKLFFsdkSKCha8B6nk5A,,,N,0,0,,,2014-04-13 07:21,2014-04-14 16:04,admin,admin,
2793,142890,6971,40459,7842,0,N,N,N,CP_Phys,TT_Task,DT_FixedDrtn,TK_NotStart,CZA-TK-2311-1630,Welding,8382,1512,0,70,0,186.229393,186.229393,70,70,0,70,,,,2014-10-13 15:00,2014-10-21 15:00,,2014-04-20 13:00,2014-04-28 13:00,2014-04-20 13:00,2014-04-28 13:00,2014-04-20 13:00,2014-04-28 13:00,2014-10-13 15:00,2014-10-21 15:00,,PT_Normal,,,,,XgaNe8G8QUeWKzv6RtjkSQ,O2B+MLZIm0KvpAIvTAYzFg,,,N,0,0,,,2014-04-13 07:21,2014-04-14 16:04,admin,admin,
2794,142891,6971,40459,7842,0,N,N,N,CP_Phys,TT_Task,DT_FixedDrtn,TK_NotStart,CZA-TK-2311-1640,Inspection,8382,1512,0,90,0,37.245879,37.245879,90,0,0,0,,,,2014-10-11 15:00,2014-10-21 15:00,,2014-04-17 13:00,2014-04-28 13:00,2014-04-17 13:00,2014-04-28 13:00,2014-04-17 13:00,2014-04-28 13:00,2014-10-11 15:00,2014-10-21 15:00,,PT_Normal,,,,,+IABjDRoIU+QSGAGxzZHlQ,8hxyDusyRUuiF2+ZikruOw,,,N,0,0,,,2014-04-13 07:21,2014-04-14 16:04,admin,admin,
2795,142892,6971,40460,7842,0,N,N,N,CP_Phys,TT_Task,DT_FixedDrtn,TK_NotStart,CZA-TK-2311-1650,Erection and Fit-up,8382,1512,0,20,0,101.881136,101.881136,20,20,0,20,,,,2014-10-21 15:00,2014-10-23 15:00,,2014-04-28 13:00,2014-04-30 13:00,2014-04-28 13:00,2014-04-30 13:00,2014-04-28 13:00,2014-04-30 13:00,2014-10-21 15:00,2014-10-23 15:00,,PT_Normal,,,,,tG4j3p/CwEKUazJKL6YtxQ,3BL6rSaoDEeiL12O7bABtg,,,N,0,0,,,2014-04-13 07:21,2014-04-14 16:04,admin,admin,
2796,142893,6971,40460,7842,0,N,N,N,CP_Phys,TT_Task,DT_FixedDrtn,TK_NotStart,CZA-TK-2311-1660,Welding,8382,1512,0,70,0,127.35142,127.35142,70,70,0,70,,,,2014-10-23 15:00,2014-11-01 15:00,,2014-04-30 13:00,2014-05-08 13:00,2014-04-30 13:00,2014-05-08 13:00,2014-04-30 13:00,2014-05-08 13:00,2014-10-23 15:00,2014-11-01 15:00,,PT_Normal,,,,,j/QVaDzabkWQUJQqH4gSDQ,ciyTDK2qfUKf03SbyaUGaA,,,N,0,0,,,2014-04-13 07:21,2014-04-14 16:04,admin,admin,
2797,142894,6971,40460,7842,0,N,N,N,CP_Phys,TT_Task,DT_FixedDrtn,TK_NotStart,CZA-TK-2311-1670,Inspection,8382,1512,0,90,0,25.470284,25.470284,90,0,0,0,,,,2014-10-21 15:00,2014-11-01 15:00,,2014-04-28 13:00,2014-05-08 13:00,2014-04-28 13:00,2014-05-08 13:00,2014-04-28 13:00,2014-05-08 13:00,2014-10-21 15:00,2014-11-01 15:00,,PT_Normal,,,,,S5e2Rqkyk0eWS7WTDYupqw,wLjQJC/IIkKCKrcnc+LX4A,,,N,0,0,,,2014-04-13 07:21,2014-04-14 16:04,admin,admin,
2798,142895,6971,40461,7842,0,N,N,N,CP_Phys,TT_Task,DT_FixedDrtn,TK_NotStart,CZA-TK-2311-2010,"Jacking, Erection and Fit-up",8382,1512,0,20,0,511.025011,511.025011,20,20,0,20,,,,2015-03-11 15:00,2015-03-14 15:00,,2014-09-16 13:00,2014-09-18 13:00,2014-09-16 13:00,2014-09-18 13:00,2014-09-16 13:00,2014-09-18 13:00,2015-03-11 15:00,2015-03-14 15:00,,PT_Normal,,,,,KnVII0zfgkOhVamK3O9CWw,aLtIz5qpi0G3U6OAGVisrA,,,N,0,0,,,2014-04-13 07:21,2014-04-14 16:04,admin,admin,
2799,142896,6971,40461,7842,0,N,N,N,CP_Phys,TT_Task,DT_FixedDrtn,TK_NotStart,CZA-TK-2311-2020,Welding,8382,1512,0,70,0,638.781263,638.781263,70,70,0,70,,,,2015-03-14 15:00,2015-03-22 15:00,,2014-09-18 13:00,2014-09-27 13:00,2014-09-18 13:00,2014-09-27 13:00,2014-09-18 13:00,2014-09-27 13:00,2015-03-14 15:00,2015-03-22 15:00,,PT_Normal,,,,,Oqg9i3NpmEu3nlqXBzPsEg,Avmu7CuU3UKvDdkoADXP8g,,,N,0,0,,,2014-04-13 07:21,2014-04-14 16:04,admin,admin,
2800,142897,6971,40461,7842,0,N,N,N,CP_Phys,TT_Task,DT_FixedDrtn,TK_NotStart,CZA-TK-2311-2030,Inspection,8382,1512,0,90,0,127.756253,127.756253,90,0,0,0,,,,2015-03-11 15:00,2015-03-22 15:00,,2014-09-16 13:00,2014-09-27 13:00,2014-09-16 13:00,2014-09-27 13:00,2014-09-16 13:00,2014-09-27 13:00,2015-03-11 15:00,2015-03-22 15:00,,PT_Normal,,,,,9hqdiVSTWkKrW3i/Ywqttg,Izorel6xdUSqCT320mvc+Q,,,N,0,0,,,2014-04-13 07:21,2014-04-14 16:04,admin,admin,
2801,142898,6971,40462,7842,0,N,N,N,CP_Phys,TT_Task,DT_FixedDrtn,TK_NotStart,CZA-TK-2311-1800,Laying and Fit-up,8382,1512,0,20,0,0,0,20,20,0,20,,,,2014-12-17 15:00,2014-12-20 15:00,,2014-06-24 13:00,2014-06-26 13:00,2014-06-24 13:00,2014-06-26 13:00,2014-06-24 13:00,2014-06-26 13:00,2014-12-17 15:00,2014-12-20 15:00,,PT_Normal,,,,,KaOgdA6LsEa2D8GyN+uNcw,RaUhde4rt0yq0yI1PDp5Wg,,,N,0,0,,,2014-04-13 07:21,2014-04-14 16:04,admin,admin,
2802,142899,6971,40462,7842,0,N,N,N,CP_Phys,TT_Task,DT_FixedDrtn,TK_NotStart,CZA-TK-2311-1810,Welding,8382,1512,0,100,0,0,0,100,100,0,100,,,,2014-12-20 15:00,2014-12-31 15:00,,2014-06-26 13:00,2014-07-08 13:00,2014-06-26 13:00,2014-07-08 13:00,2014-06-26 13:00,2014-07-08 13:00,2014-12-20 15:00,2014-12-31 15:00,,PT_Normal,,,,,AKXJfvWxXkGM97/964pbWA,GrkKSjFZM0ikMBEwz80bZg,,,N,0,0,,,2014-04-13 07:21,2014-04-14 16:04,admin,admin,
2803,142900,6971,40462,7842,0,N,N,N,CP_Phys,TT_Task,DT_FixedDrtn,TK_NotStart,CZA-TK-2311-1820,Inspection,8382,1512,0,120,0,0,0,120,0,0,0,,,,2014-12-17 15:00,2014-12-31 15:00,,2014-06-24 13:00,2014-07-08 13:00,2014-06-24 13:00,2014-07-08 13:00,2014-06-24 13:00,2014-07-08 13:00,2014-12-17 15:00,2014-12-31 15:00,,PT_Normal,,,,,PnTT7+Vhjka3u7tvpSBZaQ,K10WYhtTt0+vvjUdno5TFw,,,N,0,0,,,2014-04-13 07:21,2014-04-14 16:04,admin,admin,
2804,142901,6971,40463,7842,0,N,N,N,CP_Phys,TT_Task,DT_FixedDrtn,TK_NotStart,CZA-TK-2311-1830,"Cutting,lnstallation and Fit-up",8382,1512,0,30,0,0,0,30,30,0,30,,,,2014-12-31 15:00,2015-01-04 15:00,,2014-07-08 13:00,2014-07-12 13:00,2014-07-08 13:00,2014-07-12 13:00,2014-07-08 13:00,2014-07-12 13:00,2014-12-31 15:00,2015-01-04 15:00,,PT_Normal,,,,,Cd6LcST6F0KM7g2irtVd1w,hEm82RDiI0+R5p9WrK8L2g,,,N,0,0,,,2014-04-13 07:21,2014-04-14 16:04,admin,admin,
2805,142902,6971,40463,7842,0,N,N,N,CP_Phys,TT_Task,DT_FixedDrtn,TK_NotStart,CZA-TK-2311-1840,Welding,8382,1512,0,70,0,0,0,70,70,0,70,,,,2015-01-04 15:00,2015-01-12 15:00,,2014-07-12 13:00,2014-07-20 13:00,2014-07-12 13:00,2014-07-20 13:00,2014-07-12 13:00,2014-07-20 13:00,2015-01-04 15:00,2015-01-12 15:00,,PT_Normal,,,,,NJ44IJcRt0y72ekqbV1pdg,Q7QdTZ1thE+/zVXm/SyZyg,,,N,0,0,,,2014-04-13 07:21,2014-04-14 16:04,admin,admin,
2806,142903,6971,40463,7842,0,N,N,N,CP_Phys,TT_Task,DT_FixedDrtn,TK_NotStart,CZA-TK-2311-1850,Inspection,8382,1512,0,100,0,0,0,100,0,0,0,,,,2014-12-31 15:00,2015-01-12 15:00,,2014-07-08 13:00,2014-07-20 13:00,2014-07-08 13:00,2014-07-20 13:00,2014-07-08 13:00,2014-07-20 13:00,2014-12-31 15:00,2015-01-12 15:00,,PT_Normal,,,,,e6+iLv5vAk6+I4bGIAsREw,rFGMYOk8dEqq/6SHkFukoQ,,,N,0,0,,,2014-04-13 07:21,2014-04-14 16:04,admin,admin,
2807,142904,6971,40464,7842,0,N,N,N,CP_Phys,TT_Task,DT_FixedDrtn,TK_NotStart,CZA-TK-2311-2100,Erection and Fit-up,8382,1512,0,30,0,0,0,30,30,0,30,,,,2015-04-11 15:00,2015-04-14 15:00,,2014-10-16 13:00,2014-10-20 13:00,2014-10-16 13:00,2014-10-20 13:00,2014-10-16 13:00,2014-10-20 13:00,2015-04-11 15:00,2015-04-14 15:00,,PT_Normal,,,,,rU3E63ZwB0Oysa3DOvpVjA,blyA3InnL0GXgHbaO5wvQA,,,N,0,0,,,2014-04-13 07:21,2014-04-14 16:04,admin,admin,
2808,142905,6971,40464,7842,0,N,N,N,CP_Phys,TT_Task,DT_FixedDrtn,TK_NotStart,CZA-TK-2311-2110,Welding,8382,1512,0,70,0,0,0,70,70,0,70,,,,2015-04-14 15:00,2015-04-22 15:00,,2014-10-20 13:00,2014-10-28 13:00,2014-10-20 13:00,2014-10-28 13:00,2014-10-20 13:00,2014-10-28 13:00,2015-04-14 15:00,2015-04-22 15:00,,PT_Normal,,,,,+rAMGDHpOUS6NIOJlS5+jw,MuymKWNV4UuFfkpCP8WVSg,,,N,0,0,,,2014-04-13 07:21,2014-04-14 16:04,admin,admin,
2809,142906,6971,40464,7842,0,N,N,N,CP_Phys,TT_Task,DT_FixedDrtn,TK_NotStart,CZA-TK-2311-2120,Inspection,8382,1512,0,100,0,0,0,100,0,0,0,,,,2015-04-11 15:00,2015-04-22 15:00,,2014-10-16 13:00,2014-10-28 13:00,2014-10-16 13:00,2014-10-28 13:00,2014-10-16 13:00,2014-10-28 13:00,2015-04-11 15:00,2015-04-22 15:00,,PT_Normal,,,,,FrHRdzQwLEih0xyOajZaHA,Uz5J6r23Gk+JnlqnpvUygg,,,N,0,0,,,2014-04-13 07:21,2014-04-14 16:04,admin,admin,
2810,142907,6971,40256,7842,0,N,N,N,CP_Phys,TT_Task,DT_FixedDrtn,TK_NotStart,CZA-TK-2311-1980,"Jacking, Erection and Fit-up",8382,1512,0,20,0,347.610689,347.610689,20,20,0,20,,,,2015-03-01 15:00,2015-03-03 15:00,,2014-09-06 13:00,2014-09-08 13:00,2014-09-06 13:00,2014-09-08 13:00,2014-09-06 13:00,2014-09-08 13:00,2015-03-01 15:00,2015-03-03 15:00,,PT_Normal,,,,,pM02ECXleEOBuh/MYg6RBg,JUpeSJ7P8Emp3MQT9pQj9g,,,N,0,0,,,2014-04-13 07:21,2014-04-14 16:04,admin,admin,
2811,142908,6971,40256,7842,0,N,N,N,CP_Phys,TT_Task,DT_FixedDrtn,TK_NotStart,CZA-TK-2311-1990,Welding,8382,1512,0,70,0,434.513361,434.513361,70,70,0,70,,,,2015-03-03 15:00,2015-03-11 15:00,,2014-09-08 13:00,2014-09-16 13:00,2014-09-08 13:00,2014-09-16 13:00,2014-09-08 13:00,2014-09-16 13:00,2015-03-03 15:00,2015-03-11 15:00,,PT_Normal,,,,,lkT7hgtADUmhPR8pDFEuVQ,L51KWPMh7E+9GGLCHKVDtg,,,N,0,0,,,2014-04-13 07:21,2014-04-14 16:04,admin,admin,
2812,142909,6971,40256,7842,0,N,N,N,CP_Phys,TT_Task,DT_FixedDrtn,TK_NotStart,CZA-TK-2311-2000,Inspection,8382,1512,0,90,0,86.902672,86.902672,90,0,0,0,,,,2015-03-01 15:00,2015-03-11 15:00,,2014-09-06 13:00,2014-09-16 13:00,2014-09-06 13:00,2014-09-16 13:00,2014-09-06 13:00,2014-09-16 13:00,2015-03-01 15:00,2015-03-11 15:00,,PT_Normal,,,,,og3fBDFvAkeW6XtRAom7dw,Pb62nZRgZUukVnFLj3+9Eg,,,N,0,0,,,2014-04-13 07:21,2014-04-14 16:04,admin,admin,
2813,142910,6971,40257,7842,0,N,N,N,CP_Phys,TT_Task,DT_FixedDrtn,TK_NotStart,CZA-TK-2311-2040,"Jacking, Erection and Fit-up",8382,1512,0,20,0,669.681815,669.681815,20,20,0,20,,,,2015-03-22 15:00,2015-03-24 15:00,,2014-09-27 13:00,2014-09-29 13:00,2014-09-27 13:00,2014-09-29 13:00,2014-09-27 13:00,2014-09-29 13:00,2015-03-22 15:00,2015-03-24 15:00,,PT_Normal,,,,,bdzG+/dStkalRlTs45Js0A,tSrPDDouFkCIzvX3QdGehg,,,N,0,0,,,2014-04-13 07:21,2014-04-14 16:04,admin,admin,
2814,142911,6971,40257,7842,0,N,N,N,CP_Phys,TT_Task,DT_FixedDrtn,TK_NotStart,CZA-TK-2311-2050,Welding,8382,1512,0,70,0,837.102269,837.102269,70,70,0,70,,,,2015-03-24 15:00,2015-04-01 15:00,,2014-09-29 13:00,2014-10-07 13:00,2014-09-29 13:00,2014-10-07 13:00,2014-09-29 13:00,2014-10-07 13:00,2015-03-24 15:00,2015-04-01 15:00,,PT_Normal,,,,,nWLaG1IVR0a/ARSBKjgNDA,JjLlnnULiUOju3S/Wu8eow,,,N,0,0,,,2014-04-13 07:21,2014-04-14 16:04,admin,admin,
2815,142912,6971,40257,7842,0,N,N,N,CP_Phys,TT_Task,DT_FixedDrtn,TK_NotStart,CZA-TK-2311-2060,Inspection,8382,1512,0,90,0,167.420454,167.420454,90,0,0,0,,,,2015-03-22 15:00,2015-04-01 15:00,,2014-09-27 13:00,2014-10-07 13:00,2014-09-27 13:00,2014-10-07 13:00,2014-09-27 13:00,2014-10-07 13:00,2015-03-22 15:00,2015-04-01 15:00,,PT_Normal,,,,,7Kd5xSLBPUSoTTlkwNKqkA,ZBaUup9rJE2vbQb1K6SW2g,,,N,0,0,,,2014-04-13 07:21,2014-04-14 16:04,admin,admin,
2816,142913,6971,40258,7842,0,N,N,N,CP_Phys,TT_Task,DT_FixedDrtn,TK_NotStart,CZA-TK-2311-2070,"Lay-out, Cutting, and Fit-up",8382,1512,0,40,0,0,0,40,40,0,40,,,,2015-04-01 15:00,2015-04-06 15:00,,2014-10-07 13:00,2014-10-12 13:00,2014-10-07 13:00,2014-10-12 13:00,2014-10-07 13:00,2014-10-12 13:00,2015-04-01 15:00,2015-04-06 15:00,,PT_Normal,,,,,MRoPZn4e7EypNhU2CDVVDQ,gGwN6haqZk6no+xev1Wb6w,,,N,0,0,,,2014-04-13 07:21,2014-04-14 16:04,admin,admin,
2817,142914,6971,40258,7842,0,N,N,N,CP_Phys,TT_Task,DT_FixedDrtn,TK_NotStart,CZA-TK-2311-2080,Welding,8382,1512,0,80,0,0,0,80,80,0,80,,,,2015-04-06 15:00,2015-04-15 15:00,,2014-10-12 13:00,2014-10-21 13:00,2014-10-12 13:00,2014-10-21 13:00,2014-10-12 13:00,2014-10-21 13:00,2015-04-06 15:00,2015-04-15 15:00,,PT_Normal,,,,,ND6GQs4OgkKzYcsz0Aq9uA,5EDW2TJ48kedbpVjdr8GJg,,,N,0,0,,,2014-04-13 07:21,2014-04-14 16:04,admin,admin,
2818,142915,6971,40258,7842,0,N,N,N,CP_Phys,TT_Task,DT_FixedDrtn,TK_NotStart,CZA-TK-2311-2090,Inspection,8382,1512,0,120,0,0,0,120,0,0,0,,,,2015-04-01 15:00,2015-04-15 15:00,,2014-10-07 13:00,2014-10-21 13:00,2014-10-07 13:00,2014-10-21 13:00,2014-10-07 13:00,2014-10-21 13:00,2015-04-01 15:00,2015-04-15 15:00,,PT_Normal,,,,,0HVsLbf/d0a2fswSqUsA2A,/U1k/zzMHUG+rUy2uxPDKw,,,N,0,0,,,2014-04-13 07:21,2014-04-14 16:04,admin,admin,
2819,142916,6971,40259,7842,0,N,N,N,CP_Phys,TT_Task,DT_FixedDrtn,TK_NotStart,CZA-TK-2311-1860,Erection and Fit-up,8382,1512,0,40,0,0,0,40,40,0,40,,,,2015-01-12 15:00,2015-01-17 15:00,,2014-07-20 13:00,2014-07-24 13:00,2014-07-20 13:00,2014-07-24 13:00,2014-07-20 13:00,2014-07-24 13:00,2015-01-12 15:00,2015-01-17 15:00,,PT_Normal,,,,,4mR+rZFrkkGQl8xKjSp8XQ,FSmA+tLBNkWhJ5qB2mMchQ,,,N,0,0,,,2014-04-13 07:21,2014-04-14 16:04,admin,admin,
2820,142917,6971,40259,7842,0,N,N,N,CP_Phys,TT_Task,DT_FixedDrtn,TK_NotStart,CZA-TK-2311-1870,Welding,8382,1512,0,100,0,0,0,100,100,0,100,,,,2015-01-17 15:00,2015-01-28 15:00,,2014-07-24 13:00,2014-08-05 13:00,2014-07-24 13:00,2014-08-05 13:00,2014-07-24 13:00,2014-08-05 13:00,2015-01-17 15:00,2015-01-28 15:00,,PT_Normal,,,,,nttI2LFYGEmXW1pqeNL0Dw,34cU5KIqT0KHvPgCYHIMeQ,,,N,0,0,,,2014-04-13 07:21,2014-04-14 16:04,admin,admin,
2821,142918,6971,40259,7842,0,N,N,N,CP_Phys,TT_Task,DT_FixedDrtn,TK_NotStart,CZA-TK-2311-1880,Inspection,8382,1512,0,140,0,0,0,140,0,0,0,,,,2015-01-12 15:00,2015-01-28 15:00,,2014-07-20 13:00,2014-08-05 13:00,2014-07-20 13:00,2014-08-05 13:00,2014-07-20 13:00,2014-08-05 13:00,2015-01-12 15:00,2015-01-28 15:00,,PT_Normal,,,,,QX2Ww0lOhEKRRkqxbBjV5w,ZcRJLRM6SUa2g7zuVL28NA,,,N,0,0,,,2014-04-13 07:21,2014-04-14 16:04,admin,admin,
2822,142919,6971,40260,7842,0,N,N,N,CP_Phys,TT_Task,DT_FixedDrtn,TK_NotStart,CZA-TK-2311-1890,"Jacking, Erection and Fit-up",8382,1512,0,20,0,198.666574,198.666574,20,20,0,20,,,,2015-01-28 15:00,2015-01-31 15:00,,2014-08-05 13:00,2014-08-07 13:00,2014-08-05 13:00,2014-08-07 13:00,2014-08-05 13:00,2014-08-07 13:00,2015-01-28 15:00,2015-01-31 15:00,,PT_Normal,,,,,mhosgRaITUqxucE9dKXd9Q,ktnbe5O/tEG4HDIil7d5Ig,,,N,0,0,,,2014-04-13 07:21,2014-04-14 16:04,admin,admin,
2823,142920,6971,40260,7842,0,N,N,N,CP_Phys,TT_Task,DT_FixedDrtn,TK_NotStart,CZA-TK-2311-1900,Welding,8382,1512,0,70,0,248.333218,248.333218,70,70,0,70,,,,2015-01-31 15:00,2015-02-08 15:00,,2014-08-07 13:00,2014-08-16 13:00,2014-08-07 13:00,2014-08-16 13:00,2014-08-07 13:00,2014-08-16 13:00,2015-01-31 15:00,2015-02-08 15:00,,PT_Normal,,,,,kxvTVKhP+0KDkxskyNtPzw,AZQtU2p+C0iTgjJS/dN6LQ,,,N,0,0,,,2014-04-13 07:21,2014-04-14 16:04,admin,admin,
2824,142921,6971,40260,7842,0,N,N,N,CP_Phys,TT_Task,DT_FixedDrtn,TK_NotStart,CZA-TK-2311-1910,Inspection,8382,1512,0,90,0,49.666644,49.666644,90,0,0,0,,,,2015-01-28 15:00,2015-02-08 15:00,,2014-08-05 13:00,2014-08-16 13:00,2014-08-05 13:00,2014-08-16 13:00,2014-08-05 13:00,2014-08-16 13:00,2015-01-28 15:00,2015-02-08 15:00,,PT_Normal,,,,,MxOg/EFlGESuKvLQsNDepA,UkvcqaMybUKch4FbwXoHVA,,,N,0,0,,,2014-04-13 07:21,2014-04-14 16:04,admin,admin,
2825,142922,6971,40261,7842,0,N,N,N,CP_Phys,TT_Task,DT_FixedDrtn,TK_NotStart,CZA-TK-2311-1920,"Jacking,Erection and Fit-up",8382,1512,0,20,0,248.218302,248.218302,20,20,0,20,,,,2015-02-08 15:00,2015-02-10 15:00,,2014-08-16 13:00,2014-08-18 13:00,2014-08-16 13:00,2014-08-18 13:00,2014-08-16 13:00,2014-08-18 13:00,2015-02-08 15:00,2015-02-10 15:00,,PT_Normal,,,,,RHWhRzGl0EiPT3B5YKi/Bw,cEsbdzFBuk6N/CZPqRrSFg,,,N,0,0,,,2014-04-13 07:21,2014-04-14 16:04,admin,admin,
2826,142923,6971,40261,7842,0,N,N,N,CP_Phys,TT_Task,DT_FixedDrtn,TK_NotStart,CZA-TK-2311-1930,Welding,8382,1512,0,70,0,310.272877,310.272877,70,70,0,70,,,,2015-02-10 15:00,2015-02-18 15:00,,2014-08-18 13:00,2014-08-26 13:00,2014-08-18 13:00,2014-08-26 13:00,2014-08-18 13:00,2014-08-26 13:00,2015-02-10 15:00,2015-02-18 15:00,,PT_Normal,,,,,mwp7YvWz9kuq/45a2tVAHg,CZxipnYJw0eaWJ4JjMItLg,,,N,0,0,,,2014-04-13 07:21,2014-04-14 16:04,admin,admin,
2827,142924,6971,40261,7842,0,N,N,N,CP_Phys,TT_Task,DT_FixedDrtn,TK_NotStart,CZA-TK-2311-1940,Inspection,8382,1512,0,90,0,62.054575,62.054575,90,0,0,0,,,,2015-02-08 15:00,2015-02-18 15:00,,2014-08-16 13:00,2014-08-26 13:00,2014-08-16 13:00,2014-08-26 13:00,2014-08-16 13:00,2014-08-26 13:00,2015-02-08 15:00,2015-02-18 15:00,,PT_Normal,,,,,sxnuW/jlu0uu2aWQC6d2/A,ZnAVBk7so0qZpOdqRlMn+g,,,N,0,0,,,2014-04-13 07:21,2014-04-14 16:04,admin,admin,
2828,142925,6971,40262,7842,0,N,N,N,CP_Phys,TT_Task,DT_FixedDrtn,TK_NotStart,CZA-TK-2311-1950,"Jacking,Erection and Fit-up",8382,1512,0,20,0,297.914495,297.914495,20,20,0,20,,,,2015-02-18 15:00,2015-02-21 15:00,,2014-08-26 13:00,2014-08-28 13:00,2014-08-26 13:00,2014-08-28 13:00,2014-08-26 13:00,2014-08-28 13:00,2015-02-18 15:00,2015-02-21 15:00,,PT_Normal,,,,,leijL4n2OEKBN9eLlC1Dxg,00q0PpyRO0Ofmfgjx3PdDw,,,N,0,0,,,2014-04-13 07:21,2014-04-14 16:04,admin,admin,
2829,142926,6971,40262,7842,0,N,N,N,CP_Phys,TT_Task,DT_FixedDrtn,TK_NotStart,CZA-TK-2311-1960,Welding,8382,1512,0,70,0,372.393119,372.393119,70,70,0,70,,,,2015-02-21 15:00,2015-03-01 15:00,,2014-08-28 13:00,2014-09-06 13:00,2014-08-28 13:00,2014-09-06 13:00,2014-08-28 13:00,2014-09-06 13:00,2015-02-21 15:00,2015-03-01 15:00,,PT_Normal,,,,,NoIGmpwIHkWY6ncEsuQf9g,86HdBZlSlEusAtK9ITteUg,,,N,0,0,,,2014-04-13 07:21,2014-04-14 16:04,admin,admin,
2830,142927,6971,40262,7842,0,N,N,N,CP_Phys,TT_Task,DT_FixedDrtn,TK_NotStart,CZA-TK-2311-1970,Inspection,8382,1512,0,90,0,74.478624,74.478624,90,0,0,0,,,,2015-02-18 15:00,2015-03-01 15:00,,2014-08-26 13:00,2014-09-06 13:00,2014-08-26 13:00,2014-09-06 13:00,2014-08-26 13:00,2014-09-06 13:00,2015-02-18 15:00,2015-03-01 15:00,,PT_Normal,,,,,ZzfB/746rk+O+mnk8mvZTA,xcRRsfnZ4k6pjLiHXup/jQ,,,N,0,0,,,2014-04-13 07:21,2014-04-14 16:04,admin,admin,
2831,142928,6971,40055,7842,0,N,N,N,CP_Phys,TT_Task,DT_FixedDrtn,TK_NotStart,CZA-TK-3201-1720,"Filling, Holding and Draining of Water",8387,2752,0,50,0,1257.508064,1257.508064,50,0,0,0,,,,2015-06-06 15:00,2015-06-11 15:00,,2014-07-20 13:00,2014-07-26 13:00,2014-07-20 13:00,2014-07-26 13:00,2014-07-20 13:00,2014-07-26 13:00,2015-06-06 15:00,2015-06-11 15:00,,PT_Normal,,,,,d2qmbbbc/EKxDW6nxg6QTg,,,,N,0,0,,,2014-04-13 07:21,2014-04-14 16:04,admin,admin,
2832,142929,6971,40056,7842,0,N,N,N,CP_Phys,TT_Task,DT_FixedDrtn,TK_NotStart,CZA-TK-3201-1730,"Blasting and Painting of Bottom, Shell and Roof (Inside & Outside)",8387,2752,0,70,0,754.504838,754.504838,70,0,0,0,,,,2015-06-11 15:00,2015-06-20 15:00,,2014-07-26 13:00,2014-08-03 13:00,2014-07-26 13:00,2014-08-03 13:00,2014-07-26 13:00,2014-08-03 13:00,2015-06-11 15:00,2015-06-20 15:00,,PT_Normal,,,,,hoiaN7iP70CwRfCK1fCD9g,,,,N,0,0,,,2014-04-13 07:21,2014-04-14 16:04,admin,admin,
2833,142930,6971,40057,7842,0,N,N,N,CP_Phys,TT_Task,DT_FixedDrtn,TK_NotStart,CZA-TK-3201-1740,Tank Calibration,8387,2752,0,50,0,251.501613,251.501613,50,0,0,0,,,,2015-06-20 15:00,2015-06-25 15:00,,2014-08-03 13:00,2014-08-09 13:00,2014-08-03 13:00,2014-08-09 13:00,2014-08-03 13:00,2014-08-09 13:00,2015-06-20 15:00,2015-06-25 15:00,,PT_Normal,,,,,h2bAFcAfcUadK7qVRnjVvw,,,,N,0,0,,,2014-04-13 07:21,2014-04-14 16:04,admin,admin,
2834,142931,6971,40057,7842,0,N,N,N,CP_Phys,TT_Task,DT_FixedDrtn,TK_NotStart,CZA-TK-3201-1750,Tank Handover,8387,2752,1240,20,0,251.501613,251.501613,20,0,0,0,,,,2015-06-25 15:00,2015-06-28 15:00,,2014-08-09 13:00,2014-08-11 13:00,2014-08-09 13:00,2014-08-11 13:00,2014-08-09 13:00,2014-08-11 13:00,2015-06-25 15:00,2015-06-28 15:00,,PT_Normal,,,,,9cZQAM9xf0mKCJnsZEZpUQ,,,,N,0,0,,,2014-04-13 07:21,2014-04-14 16:04,admin,admin,
2835,142932,6971,40058,7842,0,N,N,N,CP_Phys,TT_Task,DT_FixedDrtn,TK_NotStart,CZA-TK-3201-1000,Cutting of Annular,8492,2906,0,10,0,66.2298,66.2298,10,0,0,0,,,,2014-12-02 13:00,2014-12-03 13:00,,2013-12-29 07:00,2013-12-29 17:00,2013-12-29 07:00,2013-12-29 17:00,2013-12-29 07:00,2013-12-29 17:00,2014-12-02 13:00,2014-12-03 13:00,,PT_Normal,,,,,ZQYaoFFf/UG3Bm5fTjkQ6w,,,,N,0,0,,,2014-04-13 07:21,2014-04-14 17:03,admin,admin,
2836,142933,6971,40058,7842,0,N,N,N,CP_Phys,TT_Task,DT_FixedDrtn,TK_NotStart,CZA-TK-3201-1010,Cutting of Bottom Plates,8492,3758,0,10,0,124.0785,124.0785,10,0,0,0,,,,2015-03-12 15:00,2015-03-14 15:00,,2013-12-30 07:00,2013-12-30 17:00,2013-12-30 07:00,2013-12-30 17:00,2013-12-30 07:00,2013-12-30 17:00,2015-03-12 15:00,2015-03-14 15:00,,PT_Normal,,,,,bAPCHJbtoka40HnkLqBTSA,,,,N,0,0,,,2014-04-13 07:21,2014-04-14 17:03,admin,admin,
2837,142934,6971,40058,7842,0,N,N,N,CP_Phys,TT_Task,DT_FixedDrtn,TK_NotStart,CZA-TK-3201-1020,"Cutting, Bevelling and Rolling No.1",8492,3758,0,10,0,582.9513,582.9513,10,0,0,0,,,,2015-03-14 15:00,2015-03-15 15:00,,2013-12-31 07:00,2013-12-31 17:00,2013-12-31 07:00,2013-12-31 17:00,2013-12-31 07:00,2013-12-31 17:00,2015-03-14 15:00,2015-03-15 15:00,,PT_Normal,,,,,lMgPAAu4kUqvDD6xbMmF4A,,,,N,0,0,,,2014-04-13 07:21,2014-04-14 17:03,admin,admin,
2838,142935,6971,40058,7842,0,N,N,N,CP_Phys,TT_Task,DT_FixedDrtn,TK_NotStart,CZA-TK-3201-1030,"Cutting, Bevelling and Rolling No.2",8492,3758,0,10,0,524.6166,524.6166,10,0,0,0,,,,2015-03-15 15:00,2015-03-16 15:00,,2014-01-01 07:00,2014-01-01 17:00,2014-01-01 07:00,2014-01-01 17:00,2014-01-01 07:00,2014-01-01 17:00,2015-03-15 15:00,2015-03-16 15:00,,PT_Normal,,,,,TYw6lQnkbkulbIs5h9HbAw,,,,N,0,0,,,2014-04-13 07:21,2014-04-14 17:03,admin,admin,
2839,142936,6971,40058,7842,0,N,N,N,CP_Phys,TT_Task,DT_FixedDrtn,TK_NotStart,CZA-TK-3201-1040,"Cutting, Fit-up and Welding of Shell Nozzles, Manholes and Other Appurtances",8492,3758,0,70,0,28.56,28.56,70,0,0,0,,,,2015-03-16 15:00,2015-03-24 15:00,,2014-01-02 07:00,2014-01-09 17:00,2014-01-02 07:00,2014-01-09 17:00,2014-01-02 07:00,2014-01-09 17:00,2015-03-16 15:00,2015-03-24 15:00,,PT_Normal,,,,,sKyHSMj680iJ8TQjTFkTEw,,,,N,0,0,,,2014-04-13 07:21,2014-04-14 17:03,admin,admin,
2840,142937,6971,40058,7842,0,N,N,N,CP_Phys,TT_Task,DT_FixedDrtn,TK_NotStart,CZA-TK-3201-1050,"Cutting, Bevelling & Rolling No.3",8492,3758,0,10,0,524.6166,524.6166,10,0,0,0,,,,2015-03-24 15:00,2015-03-25 15:00,,2014-01-11 07:00,2014-01-11 17:00,2014-01-11 07:00,2014-01-11 17:00,2014-01-11 07:00,2014-01-11 17:00,2015-03-24 15:00,2015-03-25 15:00,,PT_Normal,,,,,u/FC+mOFl0ulSN2Klvwxsw,,,,N,0,0,,,2014-04-13 07:21,2014-04-14 17:03,admin,admin,
2841,142938,6971,40058,7842,0,N,N,N,CP_Phys,TT_Task,DT_FixedDrtn,TK_NotStart,CZA-TK-3201-1090,"Cutting, Bevelling & Rolling of Shell No.4",8492,3758,0,10,0,524.6166,524.6166,10,0,0,0,,,,2015-03-25 15:00,2015-03-26 15:00,,2014-01-12 07:00,2014-01-12 17:00,2014-01-12 07:00,2014-01-12 17:00,2014-01-12 07:00,2014-01-12 17:00,2015-03-25 15:00,2015-03-26 15:00,,PT_Normal,,,,,v7luc8YBlkSjJJAU8poUfA,,,,N,0,0,,,2014-04-13 07:21,2014-04-14 17:03,admin,admin,
2842,142939,6971,40058,7842,0,N,N,N,CP_Phys,TT_Task,DT_FixedDrtn,TK_NotStart,CZA-TK-3201-1100,"Cutting, Bevelling & Rolling of Shell No.5",8492,3758,0,10,0,524.6166,524.6166,10,0,0,0,,,,2015-03-26 15:00,2015-03-28 15:00,,2014-01-13 07:00,2014-01-13 17:00,2014-01-13 07:00,2014-01-13 17:00,2014-01-13 07:00,2014-01-13 17:00,2015-03-26 15:00,2015-03-28 15:00,,PT_Normal,,,,,riYQFcYmBkiO+n+ny5Ftew,,,,N,0,0,,,2014-04-13 07:21,2014-04-14 17:03,admin,admin,
2843,142940,6971,40058,7842,0,N,N,N,CP_Phys,TT_Task,DT_FixedDrtn,TK_NotStart,CZA-TK-3201-1110,"Cutting, Bevelling & Rolling of Shell No.6",8492,3758,0,10,0,524.6166,524.6166,10,0,0,0,,,,2015-03-28 15:00,2015-03-29 15:00,,2014-01-14 07:00,2014-01-14 17:00,2014-01-14 07:00,2014-01-14 17:00,2014-01-14 07:00,2014-01-14 17:00,2015-03-28 15:00,2015-03-29 15:00,,PT_Normal,,,,,QDWbv95r4kWtXZQeU5IM9A,,,,N,0,0,,,2014-04-13 07:21,2014-04-14 17:03,admin,admin,
2844,142941,6971,40058,7842,0,N,N,N,CP_Phys,TT_Task,DT_FixedDrtn,TK_NotStart,CZA-TK-3201-1120,"Cutting, Bevelling & Rolling of Shell No.7",8492,3758,0,10,0,7.2063,7.2063,10,0,0,0,,,,2015-03-29 15:00,2015-03-30 15:00,,2014-01-15 07:00,2014-01-15 17:00,2014-01-15 07:00,2014-01-15 17:00,2014-01-15 07:00,2014-01-15 17:00,2015-03-29 15:00,2015-03-30 15:00,,PT_Normal,,,,,v6f0tO8peEKeSCo5LK2iyQ,,,,N,0,0,,,2014-04-13 07:21,2014-04-14 17:03,admin,admin,
2845,142942,6971,40058,7842,0,N,N,N,CP_Phys,TT_Task,DT_FixedDrtn,TK_NotStart,CZA-TK-3201-1130,"Cutting, Fit-up and Welding Curb Angle",8492,3758,0,30,0,14.0061,14.0061,30,0,0,0,,,,2015-03-30 15:00,2015-04-02 15:00,,2014-01-16 07:00,2014-01-19 17:00,2014-01-16 07:00,2014-01-19 17:00,2014-01-16 07:00,2014-01-19 17:00,2015-03-30 15:00,2015-04-02 15:00,,PT_Normal,,,,,fvn3RPgZe0eqNgBx9nFG+Q,,,,N,0,0,,,2014-04-13 07:21,2014-04-14 17:03,admin,admin,
2846,142943,6971,40058,7842,0,N,N,N,CP_Phys,TT_Task,DT_FixedDrtn,TK_NotStart,CZA-TK-3201-1140,"Cutting, Fit-up and Welding of Roof Structure",8492,3758,0,50,0,0,0,50,0,0,0,,,,2015-04-02 15:00,2015-04-08 15:00,,2014-01-20 07:00,2014-01-25 17:00,2014-01-20 07:00,2014-01-25 17:00,2014-01-20 07:00,2014-01-25 17:00,2015-04-02 15:00,2015-04-08 15:00,,PT_Normal,,,,,Oh9NKJLJPEaqvXTdZxocLg,,,,N,0,0,,,2014-04-13 07:21,2014-04-14 17:03,admin,admin,
2847,142944,6971,40058,7842,0,N,N,N,CP_Phys,TT_Task,DT_FixedDrtn,TK_NotStart,CZA-TK-3201-1150,"Cutting,Fit-up and Welding of Roof Plates",8492,3758,0,10,0,119.0055,119.0055,10,0,0,0,,,,2015-04-08 15:00,2015-04-09 15:00,,2014-01-26 07:00,2014-01-26 17:00,2014-01-26 07:00,2014-01-26 17:00,2014-01-26 07:00,2014-01-26 17:00,2015-04-08 15:00,2015-04-09 15:00,,PT_Normal,,,,,yuNuI5CcFEqz90m2PtstHw,,,,N,0,0,,,2014-04-13 07:21,2014-04-14 17:03,admin,admin,
2848,142945,6971,40058,7842,0,N,N,N,CP_Phys,TT_Task,DT_FixedDrtn,TK_NotStart,CZA-TK-3201-1160,"Cutting, Fit-up and Welding of Roof Platform, Gratings and Handrails",8492,3758,0,70,0,0,0,70,0,0,0,,,,2015-04-09 15:00,2015-04-18 15:00,,2014-01-27 07:00,2014-02-03 17:00,2014-01-27 07:00,2014-02-03 17:00,2014-01-27 07:00,2014-02-03 17:00,2015-04-09 15:00,2015-04-18 15:00,,PT_Normal,,,,,mJCJ5F59HkKV3sw96duX3g,,,,N,0,0,,,2014-04-13 07:21,2014-04-14 17:03,admin,admin,
2849,142946,6971,40058,7842,0,N,N,N,CP_Phys,TT_Task,DT_FixedDrtn,TK_NotStart,CZA-TK-3201-1170,"Cutting, Fit-up & Welding of Roof Nozzles,Manholes and Other Appurtances",8492,3758,0,50,0,64.68,64.68,50,0,0,0,,,,2015-04-18 15:00,2015-04-23 15:00,,2014-02-04 07:00,2014-02-09 17:00,2014-02-04 07:00,2014-02-09 17:00,2014-02-04 07:00,2014-02-09 17:00,2015-04-18 15:00,2015-04-23 15:00,,PT_Normal,,,,,+GEkunvvr0KK+XSCsQxCOA,,,,N,0,0,,,2014-04-13 07:21,2014-04-14 17:03,admin,admin,
2850,142947,6971,40058,7842,0,N,N,N,CP_Phys,TT_Task,DT_FixedDrtn,TK_NotStart,CZA-TK-3201-1180,"Cutting, Fit-up and Welding of Stairway Platform, Gratings and Handrails",8492,3758,886,70,0,0,0,70,0,0,0,,,,2015-04-23 15:00,2015-05-02 15:00,,2014-02-10 07:00,2014-02-17 17:00,2014-02-10 07:00,2014-02-17 17:00,2014-02-10 07:00,2014-02-17 17:00,2015-04-23 15:00,2015-05-02 15:00,,PT_Normal,,,,,jOgl9WJbUUC/EzDDpKSVSg,,,,N,0,0,,,2014-04-13 07:21,2014-04-14 17:03,admin,admin,
2851,142948,6971,40059,7842,0,N,N,N,CP_Phys,TT_Mile,DT_FixedDrtn,TK_NotStart,CZA-TK-3201-1190,Foundation Takeover from Client,,0,0,0,0,0,0,0,0,0,0,2014-03-23 00:00,,,2014-03-22 17:00,2014-03-22 17:00,,2014-03-23 07:00,2014-03-23 07:00,2014-03-23 07:00,2014-03-23 07:00,2014-03-23 07:00,2014-03-23 07:00,2014-03-22 17:00,2014-03-22 17:00,CS_MSO,PT_Normal,,,,,tIenRXorIU2Cti98/P++Og,,,,N,0,0,,,2014-04-13 07:21,2014-04-13 07:42,admin,admin,
2852,142949,6971,40270,7842,0,N,N,N,CP_Phys,TT_Task,DT_FixedDrtn,TK_NotStart,CZA-TK-3201-1470,Erection and Fit-up,8387,2872,0,10,0,3.154736,3.154736,10,20,0,20,,,,2015-03-30 15:00,2015-03-31 15:00,,2014-04-29 13:00,2014-04-30 13:00,2014-04-29 13:00,2014-04-30 13:00,2014-04-29 13:00,2014-04-30 13:00,2015-03-30 15:00,2015-03-31 15:00,,PT_Normal,,,,,iZrOGrfTzE+73RN/pPTBvw,kWHmLFHM+E2lUZww3WKkSQ,,,N,0,0,,,2014-04-13 07:21,2014-04-14 16:04,admin,admin,
2853,142950,6971,40270,7842,0,N,N,N,CP_Phys,TT_Task,DT_FixedDrtn,TK_NotStart,CZA-TK-3201-1480,Welding,8387,2882,10,20,0,3.943421,3.943421,20,40,0,40,,,,2015-04-01 15:00,2015-04-04 15:00,,2014-04-30 13:00,2014-05-03 13:00,2014-04-30 13:00,2014-05-03 13:00,2014-04-30 13:00,2014-05-03 13:00,2015-04-01 15:00,2015-04-04 15:00,,PT_Normal,,,,,nUJMy0FVOkaUJfpEZzRc1g,VAqp+5HP6UmbsLCUA5vTzw,,,N,0,0,,,2014-04-13 07:21,2014-04-14 16:04,admin,admin,
2854,142951,6971,40270,7842,0,N,N,N,CP_Phys,TT_Task,DT_FixedDrtn,TK_NotStart,CZA-TK-3201-1490,Inspection,8387,2872,0,30,0,0.788684,0.788684,30,0,0,0,,,,2015-03-31 15:00,2015-04-04 15:00,,2014-04-30 13:00,2014-05-04 13:00,2014-04-30 13:00,2014-05-04 13:00,2014-04-30 13:00,2014-05-04 13:00,2015-03-31 15:00,2015-04-04 15:00,,PT_Normal,,,,,QT5heSAelE6s5qIKeVLxZQ,Fpdj67wvHEm/l+lhRgohig,,,N,0,0,,,2014-04-13 07:21,2014-04-14 16:04,admin,admin,
2855,142952,6971,40480,7842,0,N,N,N,CP_Phys,TT_Task,DT_FixedDrtn,TK_NotStart,CZA-TK-3201-1500,"Cutting, Installation and Fit-up",8387,2872,0,20,0,0,0,20,40,0,40,,,,2015-04-04 15:00,2015-04-06 15:00,,2014-05-04 13:00,2014-05-06 13:00,2014-05-04 13:00,2014-05-06 13:00,2014-05-04 13:00,2014-05-06 13:00,2015-04-04 15:00,2015-04-06 15:00,,PT_Normal,,,,,+7eGuBbRsE2aLLu42ASWHQ,7q99gx9bQkedYBiQ32ZKRw,,,N,0,0,,,2014-04-13 07:21,2014-04-14 16:04,admin,admin,
2856,142953,6971,40480,7842,0,N,N,N,CP_Phys,TT_Task,DT_FixedDrtn,TK_NotStart,CZA-TK-3201-1520,Welding,8387,2872,0,30,0,0,0,30,60,0,60,,,,2015-04-06 15:00,2015-04-09 15:00,,2014-05-06 13:00,2014-05-10 13:00,2014-05-06 13:00,2014-05-10 13:00,2014-05-06 13:00,2014-05-10 13:00,2015-04-06 15:00,2015-04-09 15:00,,PT_Normal,,,,,6Xe2bNnvx0a3AmmPXa/Jbg,w2Rp5z2q6kmvl7ZfKfB6Lw,,,N,0,0,,,2014-04-13 07:21,2014-04-14 16:04,admin,admin,
2857,142954,6971,40480,7842,0,N,N,N,CP_Phys,TT_Task,DT_FixedDrtn,TK_NotStart,CZA-TK-3201-1530,Inspection,8387,2872,0,50,0,0,0,50,0,0,0,,,,2015-04-04 15:00,2015-04-09 15:00,,2014-05-04 13:00,2014-05-10 13:00,2014-05-04 13:00,2014-05-10 13:00,2014-05-04 13:00,2014-05-10 13:00,2015-04-04 15:00,2015-04-09 15:00,,PT_Normal,,,,,r3cRD6vctUayA3AuiiqDmQ,WOlW76z3mUq2ZTH1+reU/Q,,,N,0,0,,,2014-04-13 07:21,2014-04-14 16:04,admin,admin,
2858,142955,6971,40481,7842,0,N,N,N,CP_Phys,TT_Task,DT_FixedDrtn,TK_NotStart,CZA-TK-3201-1440,Erection and Fit-up,8387,2872,0,10,0,229.663918,229.663918,10,0,0,0,,,,2015-03-26 15:00,2015-03-28 15:00,,2014-04-26 13:00,2014-04-27 13:00,2014-04-26 13:00,2014-04-27 13:00,2014-04-26 13:00,2014-04-27 13:00,2015-03-26 15:00,2015-03-28 15:00,,PT_Normal,,,,,3DH/FDVvcUmL+2gCfEh6nA,3j5R7vJWHE2lsvhxu9yzeQ,,,N,0,0,,,2014-04-13 07:21,2014-04-14 16:04,admin,admin,
2859,142956,6971,40481,7842,0,N,N,N,CP_Phys,TT_Task,DT_FixedDrtn,TK_NotStart,CZA-TK-3201-1450,Welding,8387,2872,0,20,0,287.079898,287.079898,20,40,0,40,,,,2015-03-28 15:00,2015-03-30 15:00,,2014-04-27 13:00,2014-04-29 13:00,2014-04-27 13:00,2014-04-29 13:00,2014-04-27 13:00,2014-04-29 13:00,2015-03-28 15:00,2015-03-30 15:00,,PT_Normal,,,,,Q6yKBiUc3kOtIGjHjbgQgg,+JfCWsS/gEyxyOC7ISKlyA,,,N,0,0,,,2014-04-13 07:21,2014-04-14 16:04,admin,admin,
2860,142957,6971,40481,7842,0,N,N,N,CP_Phys,TT_Task,DT_FixedDrtn,TK_NotStart,CZA-TK-3201-1460,Inspection,8387,2872,0,30,0,57.41598,57.41598,30,0,0,0,,,,2015-03-26 15:00,2015-03-30 15:00,,2014-04-26 13:00,2014-04-29 13:00,2014-04-26 13:00,2014-04-29 13:00,2014-04-26 13:00,2014-04-29 13:00,2015-03-26 15:00,2015-03-30 15:00,,PT_Normal,,,,,Vih3ojIakkKwfn9DOBQAVQ,0tqGML6JrkWM0sBR6jSZTQ,,,N,0,0,,,2014-04-13 07:21,2014-04-14 16:04,admin,admin,
2861,142958,6971,40482,7842,0,N,N,N,CP_Phys,TT_Task,DT_FixedDrtn,TK_NotStart,CZA-TK-3201-1200,Laying and Fit-up,8387,2872,0,10,0,28.993736,28.993736,10,20,0,20,,,,2015-02-22 15:00,2015-02-23 15:00,,2014-03-24 13:00,2014-03-25 13:00,2014-03-24 13:00,2014-03-25 13:00,2014-03-24 13:00,2014-03-25 13:00,2015-02-22 15:00,2015-02-23 15:00,,PT_Normal,,,,,CYPHaiWCWUSXVcO5DwSEdw,4xTzSv5K0UyQPVgnB+HAyQ,,,N,0,0,,,2014-04-13 07:21,2014-04-14 16:04,admin,admin,
2862,142959,6971,40482,7842,0,N,N,N,CP_Phys,TT_Task,DT_FixedDrtn,TK_NotStart,CZA-TK-3201-1210,Welding,8387,2872,0,20,0,36.24217,36.24217,20,40,0,40,,,,2015-02-23 15:00,2015-02-25 15:00,,2014-03-25 13:00,2014-03-27 13:00,2014-03-25 13:00,2014-03-27 13:00,2014-03-25 13:00,2014-03-27 13:00,2015-02-23 15:00,2015-02-25 15:00,,PT_Normal,,,,,LgcqGEHGBUqA6j5eemK9LA,OW51u38iqkm01dl5+RGrXg,,,N,0,0,,,2014-04-13 07:21,2014-04-14 16:04,admin,admin,
2863,142960,6971,40482,7842,0,N,N,N,CP_Phys,TT_Task,DT_FixedDrtn,TK_NotStart,CZA-TK-3201-1220,Inspection,8387,2872,0,30,0,7.248434,7.248434,30,0,0,0,,,,2015-02-22 15:00,2015-02-25 15:00,,2014-03-24 13:00,2014-03-27 13:00,2014-03-24 13:00,2014-03-27 13:00,2014-03-24 13:00,2014-03-27 13:00,2015-02-22 15:00,2015-02-25 15:00,,PT_Normal,,,,,eLK3MHLNRkSn+LOSG3bMDw,zRDtiWMtNk+np2JjmFCiyg,,,N,0,0,,,2014-04-13 07:21,2014-04-14 16:04,admin,admin,
2864,142961,6971,40483,7842,0,N,N,N,CP_Phys,TT_Task,DT_FixedDrtn,TK_NotStart,CZA-TK-3201-1230,Erection and Fit-up,8387,2872,0,10,0,54.318438,54.318438,10,0,0,0,,,,2015-02-25 15:00,2015-02-26 15:00,,2014-03-27 13:00,2014-03-29 13:00,2014-03-27 13:00,2014-03-29 13:00,2014-03-27 13:00,2014-03-29 13:00,2015-02-25 15:00,2015-02-26 15:00,,PT_Normal,,,,,0jNNUVczEkmPmEY1UwA+BQ,q7RfwT5gj0+bXOv0QjWgPw,,,N,0,0,,,2014-04-13 07:21,2014-04-14 16:04,admin,admin,
2865,142962,6971,40483,7842,0,N,N,N,CP_Phys,TT_Task,DT_FixedDrtn,TK_NotStart,CZA-TK-3201-1240,Welding,8387,2872,0,30,0,67.898048,67.898048,30,60,0,60,,,,2015-02-26 15:00,2015-03-02 15:00,,2014-03-29 13:00,2014-04-01 13:00,2014-03-29 13:00,2014-04-01 13:00,2014-03-29 13:00,2014-04-01 13:00,2015-02-26 15:00,2015-03-02 15:00,,PT_Normal,,,,,8Ijddv9nZkSfrAWIFuowrQ,1PKmJY62FkK4Sk+s0nSOIA,,,N,0,0,,,2014-04-13 07:21,2014-04-14 16:04,admin,admin,
2866,142963,6971,40483,7842,0,N,N,N,CP_Phys,TT_Task,DT_FixedDrtn,TK_NotStart,CZA-TK-3201-1250,Inspection,8387,2872,0,40,0,13.57961,13.57961,40,0,0,0,,,,2015-02-25 15:00,2015-03-02 15:00,,2014-03-27 13:00,2014-04-01 13:00,2014-03-27 13:00,2014-04-01 13:00,2014-03-27 13:00,2014-04-01 13:00,2015-02-25 15:00,2015-03-02 15:00,,PT_Normal,,,,,xzZCR5O8gEGouHfN3e2JrA,i3kVVkgssE60CyweqM/fjQ,,,N,0,0,,,2014-04-13 07:21,2014-04-14 16:04,admin,admin,
2867,142964,6971,40693,7842,0,N,N,N,CP_Phys,TT_Task,DT_FixedDrtn,TK_NotStart,CZA-TK-3201-1260,Erection and Fit-up,8387,2872,0,10,0,255.201379,255.201379,10,0,0,0,,,,2015-03-02 15:00,2015-03-03 15:00,,2014-04-01 13:00,2014-04-02 13:00,2014-04-01 13:00,2014-04-02 13:00,2014-04-01 13:00,2014-04-02 13:00,2015-03-02 15:00,2015-03-03 15:00,,PT_Normal,,,,,jLyzmpEezUeH5ZawmserFw,NEEiURzJI0CFEUyx6dxh6A,,,N,0,0,,,2014-04-13 07:21,2014-04-14 16:04,admin,admin,
2868,142965,6971,40693,7842,0,N,N,N,CP_Phys,TT_Task,DT_FixedDrtn,TK_NotStart,CZA-TK-3201-1270,Welding,8387,2872,0,20,0,319.001723,319.001723,20,40,0,40,,,,2015-03-03 15:00,2015-03-05 15:00,,2014-04-02 13:00,2014-04-05 13:00,2014-04-02 13:00,2014-04-05 13:00,2014-04-02 13:00,2014-04-05 13:00,2015-03-03 15:00,2015-03-05 15:00,,PT_Normal,,,,,lZddFM+2KEmgOa7kM+46gA,z5y9eV53sUCMdYSrzXL80Q,,,N,0,0,,,2014-04-13 07:21,2014-04-14 16:04,admin,admin,
2869,142966,6971,40693,7842,0,N,N,N,CP_Phys,TT_Task,DT_FixedDrtn,TK_NotStart,CZA-TK-3201-1280,Inspection,8387,2872,0,30,0,63.800345,63.800345,30,0,0,0,,,,2015-03-02 15:00,2015-03-05 15:00,,2014-04-01 13:00,2014-04-05 13:00,2014-04-01 13:00,2014-04-05 13:00,2014-04-01 13:00,2014-04-05 13:00,2015-03-02 15:00,2015-03-05 15:00,,PT_Normal,,,,,0qZhAdnxLk634bJakQI8Yg,8yU61xoZ90usS8LAsZK7ow,,,N,0,0,,,2014-04-13 07:21,2014-04-14 16:04,admin,admin,
2870,142967,6971,40694,7842,0,N,N,N,CP_Phys,TT_Task,DT_FixedDrtn,TK_NotStart,CZA-TK-3201-1290,Erection and Fit-up,8387,2872,0,10,0,229.663918,229.663918,10,20,0,20,,,,2015-03-05 15:00,2015-03-07 15:00,,2014-04-05 13:00,2014-04-06 13:00,2014-04-05 13:00,2014-04-06 13:00,2014-04-05 13:00,2014-04-06 13:00,2015-03-05 15:00,2015-03-07 15:00,,PT_Normal,,,,,Gyi0BIYSM0CC8NWqkp6mbg,1fLtOkID4USsoZiOMIoLqA,,,N,0,0,,,2014-04-13 07:21,2014-04-14 16:04,admin,admin,
2871,142968,6971,40694,7842,0,N,N,N,CP_Phys,TT_Task,DT_FixedDrtn,TK_NotStart,CZA-TK-3201-1300,Welding,8387,2872,0,20,0,287.079898,287.079898,20,40,0,40,,,,2015-03-07 15:00,2015-03-09 15:00,,2014-04-06 13:00,2014-04-08 13:00,2014-04-06 13:00,2014-04-08 13:00,2014-04-06 13:00,2014-04-08 13:00,2015-03-07 15:00,2015-03-09 15:00,,PT_Normal,,,,,hLY1ZWlL+UmVmi3bmUQMFg,3RILvsatokSR2cgMkZxFJQ,,,N,0,0,,,2014-04-13 07:21,2014-04-14 16:04,admin,admin,
2872,142969,6971,40694,7842,0,N,N,N,CP_Phys,TT_Task,DT_FixedDrtn,TK_NotStart,CZA-TK-3201-1310,Inspection,8387,2872,0,30,0,57.41598,57.41598,30,0,0,0,,,,2015-03-05 15:00,2015-03-09 15:00,,2014-04-05 13:00,2014-04-08 13:00,2014-04-05 13:00,2014-04-08 13:00,2014-04-05 13:00,2014-04-08 13:00,2015-03-05 15:00,2015-03-09 15:00,,PT_Normal,,,,,O5Pj1ae56kq7Isi1qtKZVg,n0S4TbPN6EOJ6Xq2ln0XPw,,,N,0,0,,,2014-04-13 07:21,2014-04-14 16:04,admin,admin,
2873,142970,6971,40486,7842,0,N,N,N,CP_Phys,TT_Task,DT_FixedDrtn,TK_NotStart,CZA-TK-3201-1320,"Cutting, Installation and Fit-up",8387,2872,0,20,0,12.502848,12.502848,20,40,0,40,,,,2015-03-09 15:00,2015-03-11 15:00,,2014-04-08 13:00,2014-04-10 13:00,2014-04-08 13:00,2014-04-10 13:00,2014-04-08 13:00,2014-04-10 13:00,2015-03-09 15:00,2015-03-11 15:00,,PT_Normal,,,,,yN52XJ6n2U+BpDlUMbpcNA,xfWZSykn9US3GCleI+x61Q,,,N,0,0,,,2014-04-13 07:21,2014-04-14 16:04,admin,admin,
2874,142971,6971,40486,7842,0,N,N,N,CP_Phys,TT_Task,DT_FixedDrtn,TK_NotStart,CZA-TK-3201-1330,Welding,8387,2872,0,40,0,15.62856,15.62856,40,80,0,80,,,,2015-03-11 15:00,2015-03-16 15:00,,2014-04-10 13:00,2014-04-15 13:00,2014-04-10 13:00,2014-04-15 13:00,2014-04-10 13:00,2014-04-15 13:00,2015-03-11 15:00,2015-03-16 15:00,,PT_Normal,,,,,dB9iA4csFUG+1TbwpUtJSg,F+Y8OJbxoUKYpnHXQKiR0Q,,,N,0,0,,,2014-04-13 07:21,2014-04-14 16:04,admin,admin,
2875,142972,6971,40486,7842,0,N,N,N,CP_Phys,TT_Task,DT_FixedDrtn,TK_NotStart,CZA-TK-3201-1340,Inspection,8387,2872,0,40,0,3.125712,3.125712,40,0,0,0,,,,2015-03-11 15:00,2015-03-16 15:00,,2014-04-10 13:00,2014-04-15 13:00,2014-04-10 13:00,2014-04-15 13:00,2014-04-10 13:00,2014-04-15 13:00,2015-03-11 15:00,2015-03-16 15:00,,PT_Normal,,,,,QJ+slV/wvEa9SUN3ywMAJg,0zfzSYhqLUqZ0HE8w1+biA,,,N,0,0,,,2014-04-13 07:21,2014-04-14 16:04,admin,admin,
2876,142973,6971,40487,7842,0,N,N,N,CP_Phys,TT_Task,DT_FixedDrtn,TK_NotStart,CZA-TK-3201-1380,Erection and Fit-up,8387,2872,0,10,0,229.663918,229.663918,10,0,0,0,,,,2015-03-19 15:00,2015-03-21 15:00,,2014-04-19 13:00,2014-04-20 13:00,2014-04-19 13:00,2014-04-20 13:00,2014-04-19 13:00,2014-04-20 13:00,2015-03-19 15:00,2015-03-21 15:00,,PT_Normal,,,,,bxuVW8iadUumERD7/WnBkQ,8r5M3o8SgEWes50CefLAQw,,,N,0,0,,,2014-04-13 07:21,2014-04-14 16:04,admin,admin,
2877,142974,6971,40487,7842,0,N,N,N,CP_Phys,TT_Task,DT_FixedDrtn,TK_NotStart,CZA-TK-3201-1390,Welding,8387,2872,0,20,0,287.079898,287.079898,20,40,0,40,,,,2015-03-21 15:00,2015-03-23 15:00,,2014-04-20 13:00,2014-04-22 13:00,2014-04-20 13:00,2014-04-22 13:00,2014-04-20 13:00,2014-04-22 13:00,2015-03-21 15:00,2015-03-23 15:00,,PT_Normal,,,,,+B9z3XP0N0u3NWs8slXJIQ,6lxKm5MuVUubbRaj10fOxQ,,,N,0,0,,,2014-04-13 07:21,2014-04-14 16:04,admin,admin,
2878,142975,6971,40487,7842,0,N,N,N,CP_Phys,TT_Task,DT_FixedDrtn,TK_NotStart,CZA-TK-3201-1400,Inspection,8387,2872,0,30,0,57.41598,57.41598,30,0,0,0,,,,2015-03-19 15:00,2015-03-23 15:00,,2014-04-19 13:00,2014-04-22 13:00,2014-04-19 13:00,2014-04-22 13:00,2014-04-19 13:00,2014-04-22 13:00,2015-03-19 15:00,2015-03-23 15:00,,PT_Normal,,,,,HoSi2w/HJkmEMJFkAvvaPg,XZexYUQK40m24xI/AXFP6g,,,N,0,0,,,2014-04-13 07:21,2014-04-14 16:04,admin,admin,
2879,142976,6971,40488,7842,0,N,N,N,CP_Phys,TT_Task,DT_FixedDrtn,TK_NotStart,CZA-TK-3201-1410,Erection and Fit-up,8387,2872,0,10,0,229.663918,229.663918,10,20,0,20,,,,2015-03-23 15:00,2015-03-24 15:00,,2014-04-22 13:00,2014-04-23 13:00,2014-04-22 13:00,2014-04-23 13:00,2014-04-22 13:00,2014-04-23 13:00,2015-03-23 15:00,2015-03-24 15:00,,PT_Normal,,,,,LQAen3Ho5Eubf0A+aKT7iQ,ntaVY//C7EWSowKzw2M/Sw,,,N,0,0,,,2014-04-13 07:21,2014-04-14 16:04,admin,admin,
2880,142977,6971,40488,7842,0,N,N,N,CP_Phys,TT_Task,DT_FixedDrtn,TK_NotStart,CZA-TK-3201-1420,Welding,8387,2872,0,20,0,287.079898,287.079898,20,40,0,40,,,,2015-03-24 15:00,2015-03-26 15:00,,2014-04-23 13:00,2014-04-26 13:00,2014-04-23 13:00,2014-04-26 13:00,2014-04-23 13:00,2014-04-26 13:00,2015-03-24 15:00,2015-03-26 15:00,,PT_Normal,,,,,EVMNLlvPNE2mUUhQhdtr4Q,WjufB/43/0uh+CHEmNd6Ug,,,N,0,0,,,2014-04-13 07:21,2014-04-14 16:04,admin,admin,
2881,142978,6971,40488,7842,0,N,N,N,CP_Phys,TT_Task,DT_FixedDrtn,TK_NotStart,CZA-TK-3201-1430,Inspection,8387,2872,0,30,0,57.41598,57.41598,30,0,0,0,,,,2015-03-23 15:00,2015-03-26 15:00,,2014-04-22 13:00,2014-04-26 13:00,2014-04-22 13:00,2014-04-26 13:00,2014-04-22 13:00,2014-04-26 13:00,2015-03-23 15:00,2015-03-26 15:00,,PT_Normal,,,,,RTNd24qD/UqJ9TDx4QW/mA,nnGKkivXPkKw2oUYJvxWUA,,,N,0,0,,,2014-04-13 07:21,2014-04-14 16:04,admin,admin,
2882,142979,6971,40489,7842,0,N,N,N,CP_Phys,TT_Task,DT_FixedDrtn,TK_NotStart,CZA-TK-3201-1350,Erection and Fit-up,8387,2872,0,10,0,229.663918,229.663918,10,20,0,20,,,,2015-03-16 15:00,2015-03-17 15:00,,2014-04-15 13:00,2014-04-16 13:00,2014-04-15 13:00,2014-04-16 13:00,2014-04-15 13:00,2014-04-16 13:00,2015-03-16 15:00,2015-03-17 15:00,,PT_Normal,,,,,3WboVmmmikWlwXR8Vcpdjw,OyYqmoNg3kCd/8AHOdH+cw,,,N,0,0,,,2014-04-13 07:21,2014-04-14 16:04,admin,admin,
2883,142980,6971,40489,7842,0,N,N,N,CP_Phys,TT_Task,DT_FixedDrtn,TK_NotStart,CZA-TK-3201-1360,Welding,8387,2872,0,20,0,287.079898,287.079898,20,40,0,40,,,,2015-03-17 15:00,2015-03-19 15:00,,2014-04-16 13:00,2014-04-19 13:00,2014-04-16 13:00,2014-04-19 13:00,2014-04-16 13:00,2014-04-19 13:00,2015-03-17 15:00,2015-03-19 15:00,,PT_Normal,,,,,pfa0wqceVUCddlQ1oBbrBA,c5+O/Cg18U+uY0jLxWo4Sg,,,N,0,0,,,2014-04-13 07:21,2014-04-14 16:04,admin,admin,
2884,142981,6971,40489,7842,0,N,N,N,CP_Phys,TT_Task,DT_FixedDrtn,TK_NotStart,CZA-TK-3201-1370,Inspection,8387,2872,0,30,0,57.41598,57.41598,30,0,0,0,,,,2015-03-16 15:00,2015-03-19 15:00,,2014-04-15 13:00,2014-04-19 13:00,2014-04-15 13:00,2014-04-19 13:00,2014-04-15 13:00,2014-04-19 13:00,2015-03-16 15:00,2015-03-19 15:00,,PT_Normal,,,,,vMnM0W+A6EWgbzzBH2qUdQ,wEgU1yksi0GIsFsZWIWpMA,,,N,0,0,,,2014-04-13 07:21,2014-04-14 16:04,admin,admin,
2885,142982,6971,40490,7842,0,N,N,N,CP_Phys,TT_Task,DT_FixedDrtn,TK_NotStart,CZA-TK-3201-1660,Erection and Fit-up,8387,2872,0,50,0,0,0,50,100,0,100,,,,2015-05-02 15:00,2015-05-07 15:00,,2014-06-01 13:00,2014-06-07 13:00,2014-06-01 13:00,2014-06-07 13:00,2014-06-01 13:00,2014-06-07 13:00,2015-05-02 15:00,2015-05-07 15:00,,PT_Normal,,,,,f6NvlT9aE0mEsgCxj5Uifg,xISvkONOLUeuW4e6JAtS5g,,,N,0,0,,,2014-04-13 07:21,2014-04-14 16:04,admin,admin,
2886,142983,6971,40490,7842,0,N,N,N,CP_Phys,TT_Task,DT_FixedDrtn,TK_NotStart,CZA-TK-3201-1670,Welding,8387,2872,0,100,0,0,0,100,200,0,200,,,,2015-05-07 15:00,2015-05-19 15:00,,2014-06-07 13:00,2014-06-18 13:00,2014-06-07 13:00,2014-06-18 13:00,2014-06-07 13:00,2014-06-18 13:00,2015-05-07 15:00,2015-05-19 15:00,,PT_Normal,,,,,pY7goTJmKUuh/quBx6jTcQ,FHRY9Pkt6keAe1jb8Uv9Iw,,,N,0,0,,,2014-04-13 07:21,2014-04-14 16:04,admin,admin,
2887,142984,6971,40490,7842,0,N,N,N,CP_Phys,TT_Task,DT_FixedDrtn,TK_NotStart,CZA-TK-3201-1680,Inspection,8387,2872,0,150,0,0,0,150,0,0,0,,,,2015-05-02 15:00,2015-05-19 15:00,,2014-06-01 13:00,2014-06-18 13:00,2014-06-01 13:00,2014-06-18 13:00,2014-06-01 13:00,2014-06-18 13:00,2015-05-02 15:00,2015-05-19 15:00,,PT_Normal,,,,,YIkc+7FvpkOZ3tkajdaP9A,3A/uUzchU0qqxttIh1oVVg,,,N,0,0,,,2014-04-13 07:21,2014-04-14 16:04,admin,admin,
2888,142985,6971,40491,7842,0,N,N,N,CP_Phys,TT_Task,DT_FixedDrtn,TK_NotStart,CZA-TK-3201-1540,Erection and Fit-up,8387,2872,0,10,0,6.131517,6.131517,10,20,0,20,,,,2015-04-09 15:00,2015-04-11 15:00,,2014-05-10 13:00,2014-05-11 13:00,2014-05-10 13:00,2014-05-11 13:00,2014-05-10 13:00,2014-05-11 13:00,2015-04-09 15:00,2015-04-11 15:00,,PT_Normal,,,,,QWtHqclnfUqf+OAY8jsfdA,3pPbWNz02ECXWFvlQXUUzw,,,N,0,0,,,2014-04-13 07:21,2014-04-14 16:04,admin,admin,
2889,142986,6971,40491,7842,0,N,N,N,CP_Phys,TT_Task,DT_FixedDrtn,TK_NotStart,CZA-TK-3201-1550,Welding,8387,2872,0,20,0,7.664397,7.664397,20,40,0,40,,,,2015-04-11 15:00,2015-04-13 15:00,,2014-05-11 13:00,2014-05-13 13:00,2014-05-11 13:00,2014-05-13 13:00,2014-05-11 13:00,2014-05-13 13:00,2015-04-11 15:00,2015-04-13 15:00,,PT_Normal,,,,,+LBDp6yYd0exO06yj/XLug,CMJVuBtxs0WpSvJMgYzpdQ,,,N,0,0,,,2014-04-13 07:21,2014-04-14 16:04,admin,admin,
2890,142987,6971,40491,7842,0,N,N,N,CP_Phys,TT_Task,DT_FixedDrtn,TK_NotStart,CZA-TK-3201-1560,Inspection,8387,2872,0,30,0,1.532879,1.532879,30,0,0,0,,,,2015-04-09 15:00,2015-04-13 15:00,,2014-05-10 13:00,2014-05-13 13:00,2014-05-10 13:00,2014-05-13 13:00,2014-05-10 13:00,2014-05-13 13:00,2015-04-09 15:00,2015-04-13 15:00,,PT_Normal,,,,,Jkg272sSR0uQH/BOaJinLw,Edl0QwnUX0KIhV9WGm0FWg,,,N,0,0,,,2014-04-13 07:21,2014-04-14 16:04,admin,admin,
2891,142988,6971,40392,7842,0,N,N,N,CP_Phys,TT_Task,DT_FixedDrtn,TK_NotStart,CZA-TK-3201-1570,Laying and Fit-up,8387,2872,0,20,0,0,0,20,40,0,40,,,,2015-04-13 15:00,2015-04-15 15:00,,2014-05-13 13:00,2014-05-15 13:00,2014-05-13 13:00,2014-05-15 13:00,2014-05-13 13:00,2014-05-15 13:00,2015-04-13 15:00,2015-04-15 15:00,,PT_Normal,,,,,aq/RkvfWFUSE59wEiwVNtA,lqoLLr7/5kygFnKu35ZK/A,,,N,0,0,,,2014-04-13 07:21,2014-04-14 16:04,admin,admin,
2892,142989,6971,40392,7842,0,N,N,N,CP_Phys,TT_Task,DT_FixedDrtn,TK_NotStart,CZA-TK-3201-1580,Welding,8387,2872,0,50,0,0,0,50,100,0,100,,,,2015-04-15 15:00,2015-04-21 15:00,,2014-05-15 13:00,2014-05-21 13:00,2014-05-15 13:00,2014-05-21 13:00,2014-05-15 13:00,2014-05-21 13:00,2015-04-15 15:00,2015-04-21 15:00,,PT_Normal,,,,,wi7BW2QIWEWh/BacBD7FfA,b1nZsMlO1kWoeCCjltwXCA,,,N,0,0,,,2014-04-13 07:21,2014-04-14 16:04,admin,admin,
2893,142990,6971,40392,7842,0,N,N,N,CP_Phys,TT_Task,DT_FixedDrtn,TK_NotStart,CZA-TK-3201-1590,Inspection,8387,2872,0,70,0,0,0,70,0,0,0,,,,2015-04-13 15:00,2015-04-21 15:00,,2014-05-13 13:00,2014-05-21 13:00,2014-05-13 13:00,2014-05-21 13:00,2014-05-13 13:00,2014-05-21 13:00,2015-04-13 15:00,2015-04-21 15:00,,PT_Normal,,,,,qj9b1EgL/0qYLl2mIv4nLQ,ZJLvsA/nKk2A1bYBYtNjEg,,,N,0,0,,,2014-04-13 07:21,2014-04-14 16:04,admin,admin,
2894,142991,6971,40393,7842,0,N,N,N,CP_Phys,TT_Task,DT_FixedDrtn,TK_NotStart,CZA-TK-3201-1600,Laying and Fit-up,8387,2872,0,10,0,52.097607,52.097607,10,20,0,20,,,,2015-04-21 15:00,2015-04-22 15:00,,2014-05-21 13:00,2014-05-22 13:00,2014-05-21 13:00,2014-05-22 13:00,2014-05-21 13:00,2014-05-22 13:00,2015-04-21 15:00,2015-04-22 15:00,,PT_Normal,,,,,2fR38MjV+U6WgvVg5D0lug,38rDDPsbtU6lg7401KsAhA,,,N,0,0,,,2014-04-13 07:21,2014-04-14 16:04,admin,admin,
2895,142992,6971,40393,7842,0,N,N,N,CP_Phys,TT_Task,DT_FixedDrtn,TK_NotStart,CZA-TK-3201-1610,Welding,8387,2872,0,30,0,65.122009,65.122009,30,60,0,60,,,,2015-04-22 15:00,2015-04-26 15:00,,2014-05-22 13:00,2014-05-26 13:00,2014-05-22 13:00,2014-05-26 13:00,2014-05-22 13:00,2014-05-26 13:00,2015-04-22 15:00,2015-04-26 15:00,,PT_Normal,,,,,FTuUJaWOa0OwmnSUauKRDw,KI89ugmbZEK0feP4KzqiJQ,,,N,0,0,,,2014-04-13 07:21,2014-04-14 16:04,admin,admin,
2896,142993,6971,40393,7842,0,N,N,N,CP_Phys,TT_Task,DT_FixedDrtn,TK_NotStart,CZA-TK-3201-1620,Inspection,8387,2872,0,40,0,13.024402,13.024402,40,0,0,0,,,,2015-04-21 15:00,2015-04-26 15:00,,2014-05-21 13:00,2014-05-26 13:00,2014-05-21 13:00,2014-05-26 13:00,2014-05-21 13:00,2014-05-26 13:00,2015-04-21 15:00,2015-04-26 15:00,,PT_Normal,,,,,IRmuhnmIl0SyzAnJ24QKQA,E6Lo4VBoC0yT1PYgOG2gmg,,,N,0,0,,,2014-04-13 07:21,2014-04-14 16:04,admin,admin,
2897,142994,6971,40394,7842,0,N,N,N,CP_Phys,TT_Task,DT_FixedDrtn,TK_NotStart,CZA-TK-3201-1630,Installation and Fit-up,8387,2872,0,20,0,21.236455,21.236455,20,40,0,40,,,,2015-04-26 15:00,2015-04-28 15:00,,2014-05-26 13:00,2014-05-28 13:00,2014-05-26 13:00,2014-05-28 13:00,2014-05-26 13:00,2014-05-28 13:00,2015-04-26 15:00,2015-04-28 15:00,,PT_Normal,,,,,HK3IAXL2OUy/YhOhzaqUSQ,bD2aSVsRPUGwVgEu44Yb3g,,,N,0,0,,,2014-04-13 07:21,2014-04-14 16:04,admin,admin,
2898,142995,6971,40394,7842,0,N,N,N,CP_Phys,TT_Task,DT_FixedDrtn,TK_NotStart,CZA-TK-3201-1640,Welding,8387,2872,0,30,0,26.545568,26.545568,30,60,0,60,,,,2015-04-28 15:00,2015-05-02 15:00,,2014-05-28 13:00,2014-06-01 13:00,2014-05-28 13:00,2014-06-01 13:00,2014-05-28 13:00,2014-06-01 13:00,2015-04-28 15:00,2015-05-02 15:00,,PT_Normal,,,,,4o3CI03IDU2IYcQWavzasA,GxHnLl5VIkuOEAgeAd9eOA,,,N,0,0,,,2014-04-13 07:21,2014-04-14 16:04,admin,admin,
2899,142996,6971,40394,7842,0,N,N,N,CP_Phys,TT_Task,DT_FixedDrtn,TK_NotStart,CZA-TK-3201-1650,Inspection,8387,2872,0,50,0,5.309114,5.309114,50,0,0,0,,,,2015-04-26 15:00,2015-05-02 15:00,,2014-05-26 13:00,2014-06-01 13:00,2014-05-26 13:00,2014-06-01 13:00,2014-05-26 13:00,2014-06-01 13:00,2015-04-26 15:00,2015-05-02 15:00,,PT_Normal,,,,,ILtSjmu0/02tlFIFeDXqAw,M+mAsAseME6UwHJ2LqieAg,,,N,0,0,,,2014-04-13 07:21,2014-04-14 16:04,admin,admin,
2900,142997,6971,40286,7842,0,N,N,N,CP_Phys,TT_Task,DT_FixedDrtn,TK_NotStart,CZA-TK-3201-1690,Erection and Fit-up,8387,2872,0,50,0,0,0,50,100,0,100,,,,2015-05-19 15:00,2015-05-25 15:00,,2014-06-18 13:00,2014-06-24 13:00,2014-06-18 13:00,2014-06-24 13:00,2014-06-18 13:00,2014-06-24 13:00,2015-05-19 15:00,2015-05-25 15:00,,PT_Normal,,,,,skydDN5Gmka7hE0KRRa6Rg,DKEo/ibBLEySvEDQT8snLQ,,,N,0,0,,,2014-04-13 07:21,2014-04-14 16:04,admin,admin,
2901,142998,6971,40286,7842,0,N,N,N,CP_Phys,TT_Task,DT_FixedDrtn,TK_NotStart,CZA-TK-3201-1700,Welding,8387,2872,0,100,0,0,0,100,200,0,200,,,,2015-05-25 15:00,2015-06-06 15:00,,2014-06-24 13:00,2014-07-06 13:00,2014-06-24 13:00,2014-07-06 13:00,2014-06-24 13:00,2014-07-06 13:00,2015-05-25 15:00,2015-06-06 15:00,,PT_Normal,,,,,2EWyX4zcTUOSswE6yirZFw,qRkvgRKmaUWOLjG6xvQh+Q,,,N,0,0,,,2014-04-13 07:21,2014-04-14 16:04,admin,admin,
2902,142999,6971,40286,7842,0,N,N,N,CP_Phys,TT_Task,DT_FixedDrtn,TK_NotStart,CZA-TK-3201-1710,Inspection,8387,2872,120,150,0,0,0,150,0,0,0,,,,2015-05-19 15:00,2015-06-06 15:00,,2014-06-18 13:00,2014-07-06 13:00,2014-06-18 13:00,2014-07-06 13:00,2014-06-18 13:00,2014-07-06 13:00,2015-05-19 15:00,2015-06-06 15:00,,PT_Normal,,,,,UJ+ObPc+dE+HhBDiejD3Pg,GgO/xwUyZ0qNZDD5nEZPVQ,,,N,0,0,,,2014-04-13 07:21,2014-04-14 16:04,admin,admin,
2903,143000,6971,40079,7842,0,N,N,N,CP_Phys,TT_Task,DT_FixedDrtn,TK_NotStart,CZA-TK-2310-1000,Cutting of Annular Plate,8488,2906,0,10,0,396,396,10,0,0,0,,,,2014-11-27 13:00,2014-11-29 13:00,,2013-12-24 07:00,2013-12-24 17:00,2013-12-24 07:00,2013-12-24 17:00,2013-12-24 07:00,2013-12-24 17:00,2014-11-27 13:00,2014-11-29 13:00,,PT_Normal,,,,,kr9h8P8Z+UiQPr/vvurJxw,,,,N,0,0,,,2014-04-13 07:21,2014-04-14 17:03,admin,admin,
2904,143001,6971,40079,7842,0,N,N,N,CP_Phys,TT_Task,DT_FixedDrtn,TK_NotStart,CZA-TK-2310-1010,Cutting of Bottom Plates,8488,3770,0,10,0,1164.27,1164.27,10,0,0,0,,,,2015-03-10 07:00,2015-03-10 17:00,,2013-12-25 07:00,2013-12-25 17:00,2013-12-25 07:00,2013-12-25 17:00,2013-12-25 07:00,2013-12-25 17:00,2015-03-10 07:00,2015-03-10 17:00,,PT_Normal,,,,,Vi7hxpsic0eebeAeuP0UsQ,,,,N,0,0,,,2014-04-13 07:21,2014-04-14 17:03,admin,admin,
2905,143002,6971,40079,7842,0,N,N,N,CP_Phys,TT_Task,DT_FixedDrtn,TK_NotStart,CZA-TK-2310-1020,"Cutting, Bevelling & Rolling of Shell No.7",8488,3770,0,10,0,340.32,340.32,10,0,0,0,,,,2015-03-11 07:00,2015-03-11 17:00,,2013-12-26 07:00,2013-12-26 17:00,2013-12-26 07:00,2013-12-26 17:00,2013-12-26 07:00,2013-12-26 17:00,2015-03-11 07:00,2015-03-11 17:00,,PT_Normal,,,,,Oa8RnMXTZkOT3OvoLIrHEA,,,,N,0,0,,,2014-04-13 07:21,2014-04-14 17:03,admin,admin,
2906,143003,6971,40079,7842,0,N,N,N,CP_Phys,TT_Task,DT_FixedDrtn,TK_NotStart,CZA-TK-2310-1030,"Cutting, Fit-up and Rolling of Shell No.8",8488,3770,0,10,0,232.725,232.725,10,0,0,0,,,,2015-03-12 07:00,2015-03-12 17:00,,2013-12-28 07:00,2013-12-28 17:00,2013-12-28 07:00,2013-12-28 17:00,2013-12-28 07:00,2013-12-28 17:00,2015-03-12 07:00,2015-03-12 17:00,,PT_Normal,,,,,OuUXgyCDFUqFK3x0NAtYhw,,,,N,0,0,,,2014-04-13 07:21,2014-04-14 17:03,admin,admin,
2907,143004,6971,40079,7842,0,N,N,N,CP_Phys,TT_Task,DT_FixedDrtn,TK_NotStart,CZA-TK-2310-1040,Cutting of Compression Ring & Stairways Gratings and Handrails,8488,3770,0,60,0,0,0,60,0,0,0,,,,2015-03-14 07:00,2015-03-19 17:00,,2013-12-29 07:00,2014-01-04 17:00,2013-12-29 07:00,2014-01-04 17:00,2013-12-29 07:00,2014-01-04 17:00,2015-03-14 07:00,2015-03-19 17:00,,PT_Normal,,,,,9yi8jU8y4EWfwP9GBo6Btg,,,,N,0,0,,,2014-04-13 07:21,2014-04-14 17:03,admin,admin,
2908,143005,6971,40079,7842,0,N,N,N,CP_Phys,TT_Task,DT_FixedDrtn,TK_NotStart,CZA-TK-2310-1050,"Cutting, Fit-up and Welding Roof Structure",8488,3770,0,40,0,1154.6346,1154.6346,40,0,0,0,,,,2015-03-14 15:00,2015-03-18 15:00,,2013-12-29 15:00,2014-01-02 15:00,2013-12-29 15:00,2014-01-02 15:00,2013-12-29 15:00,2014-01-02 15:00,2015-03-14 15:00,2015-03-18 15:00,,PT_Normal,,,,,VbG/lDNHlEeLlrWCocPdCQ,,,,N,0,0,,,2014-04-13 07:21,2014-04-14 17:03,admin,admin,
2909,143006,6971,40079,7842,0,N,N,N,CP_Phys,TT_Task,DT_FixedDrtn,TK_NotStart,CZA-TK-2310-1060,Cutting of Roof Plates,8488,3770,0,30,0,1139.343,1139.343,30,0,0,0,,,,2015-03-18 15:00,2015-03-22 15:00,,2014-01-02 15:00,2014-01-06 15:00,2014-01-02 15:00,2014-01-06 15:00,2014-01-02 15:00,2014-01-06 15:00,2015-03-18 15:00,2015-03-22 15:00,,PT_Normal,,,,,HplFB9CTh0iihsWu670AAw,,,,N,0,0,,,2014-04-13 07:21,2014-04-14 17:03,admin,admin,
2910,143007,6971,40079,7842,0,N,N,N,CP_Phys,TT_Task,DT_FixedDrtn,TK_NotStart,CZA-TK-2310-1070,"Cutting, Fit-up, Welding of Roof Nozzles, Manholes and Other Appurtances",8488,3770,0,60,0,0,0,60,0,0,0,,,,2015-03-22 15:00,2015-03-29 15:00,,2014-01-06 15:00,2014-01-13 15:00,2014-01-06 15:00,2014-01-13 15:00,2014-01-06 15:00,2014-01-13 15:00,2015-03-22 15:00,2015-03-29 15:00,,PT_Normal,,,,,6882XeaJTUCFG5dLkIUmNA,,,,N,0,0,,,2014-04-13 07:21,2014-04-14 17:03,admin,admin,
2911,143008,6971,40079,7842,0,N,N,N,CP_Phys,TT_Task,DT_FixedDrtn,TK_NotStart,CZA-TK-2310-1080,"Cutting, Fit-up and Welding of Roof Platform, Gratings and Handrails",8488,3770,0,100,0,0,0,100,0,0,0,,,,2015-03-29 15:00,2015-04-09 15:00,,2014-01-13 15:00,2014-01-25 15:00,2014-01-13 15:00,2014-01-25 15:00,2014-01-13 15:00,2014-01-25 15:00,2015-03-29 15:00,2015-04-09 15:00,,PT_Normal,,,,,QqZCy5QMY0SrNIKUCzBxgA,,,,N,0,0,,,2014-04-13 07:21,2014-04-14 17:03,admin,admin,
2912,143009,6971,40079,7842,0,N,N,N,CP_Phys,TT_Task,DT_FixedDrtn,TK_NotStart,CZA-TK-2310-1090,"Cutting, Bevelling and Rolling Shell No.6",8488,3770,0,10,0,453.81,453.81,10,0,0,0,,,,2015-04-09 15:00,2015-04-11 15:00,,2014-01-25 15:00,2014-01-26 15:00,2014-01-25 15:00,2014-01-26 15:00,2014-01-25 15:00,2014-01-26 15:00,2015-04-09 15:00,2015-04-11 15:00,,PT_Normal,,,,,avWMFjuZ902XfkyYpM80EQ,,,,N,0,0,,,2014-04-13 07:21,2014-04-14 17:03,admin,admin,
2913,143010,6971,40079,7842,0,N,N,N,CP_Phys,TT_Task,DT_FixedDrtn,TK_NotStart,CZA-TK-2310-1100,"Cutting, Bevelling and Rolling Shell No.5",8488,3770,0,10,0,567,567,10,0,0,0,,,,2015-04-11 15:00,2015-04-12 15:00,,2014-01-26 15:00,2014-01-27 15:00,2014-01-26 15:00,2014-01-27 15:00,2014-01-26 15:00,2014-01-27 15:00,2015-04-11 15:00,2015-04-12 15:00,,PT_Normal,,,,,I+NvRYFXd06YZDiH42obXw,,,,N,0,0,,,2014-04-13 07:21,2014-04-14 17:03,admin,admin,
2914,143011,6971,40079,7842,0,N,N,N,CP_Phys,TT_Task,DT_FixedDrtn,TK_NotStart,CZA-TK-2310-1110,"Cutting, Bevelling and Rolling Shell No.4",8488,3770,0,10,0,680.52,680.52,10,0,0,0,,,,2015-04-12 15:00,2015-04-13 15:00,,2014-01-27 15:00,2014-01-28 15:00,2014-01-27 15:00,2014-01-28 15:00,2014-01-27 15:00,2014-01-28 15:00,2015-04-12 15:00,2015-04-13 15:00,,PT_Normal,,,,,TLkUnziu7UCGl9UdJl1P1A,,,,N,0,0,,,2014-04-13 07:21,2014-04-14 17:03,admin,admin,
2915,143012,6971,40079,7842,0,N,N,N,CP_Phys,TT_Task,DT_FixedDrtn,TK_NotStart,CZA-TK-2310-1120,"Cutting, Bevelling and Rolling Shell No.3",8488,3770,0,10,0,794.04,794.04,10,0,0,0,,,,2015-04-13 15:00,2015-04-14 15:00,,2014-01-28 15:00,2014-01-29 15:00,2014-01-28 15:00,2014-01-29 15:00,2014-01-28 15:00,2014-01-29 15:00,2015-04-13 15:00,2015-04-14 15:00,,PT_Normal,,,,,WSOqrOwpwUycdgN+grR6Xg,,,,N,0,0,,,2014-04-13 07:21,2014-04-14 17:03,admin,admin,
2916,143013,6971,40079,7842,0,N,N,N,CP_Phys,TT_Task,DT_FixedDrtn,TK_NotStart,CZA-TK-2310-1130,"Cutting, Bevelling and Rolling Shell No.2",8488,3770,0,10,0,1167.324,1167.324,10,0,0,0,,,,2015-04-14 15:00,2015-04-15 15:00,,2014-01-29 15:00,2014-01-30 15:00,2014-01-29 15:00,2014-01-30 15:00,2014-01-29 15:00,2014-01-30 15:00,2015-04-14 15:00,2015-04-15 15:00,,PT_Normal,,,,,G9+ozqczpkSqtTgIM8CBvw,,,,N,0,0,,,2014-04-13 07:21,2014-04-14 17:03,admin,admin,
2917,143014,6971,40079,7842,0,N,N,N,CP_Phys,TT_Task,DT_FixedDrtn,TK_NotStart,CZA-TK-2310-1140,"Cutting, Bevelling and Rolling Shell No.1",8488,3770,0,10,0,1529.7405,1529.7405,10,0,0,0,,,,2015-04-15 15:00,2015-04-16 15:00,,2014-01-30 15:00,2014-02-01 15:00,2014-01-30 15:00,2014-02-01 15:00,2014-01-30 15:00,2014-02-01 15:00,2015-04-15 15:00,2015-04-16 15:00,,PT_Normal,,,,,uV2619NDJE+kJnU88z0HTw,,,,N,0,0,,,2014-04-13 07:21,2014-04-14 17:03,admin,admin,
2918,143015,6971,40079,7842,0,N,N,N,CP_Phys,TT_Task,DT_FixedDrtn,TK_NotStart,CZA-TK-2310-1150,"Cutting, Fit-up & Welding of Shell Nozzles, Manholes and other Appurtanances",8488,3770,0,60,0,117.18,117.18,60,0,0,0,,,,2015-04-16 15:00,2015-04-23 15:00,,2014-02-01 15:00,2014-02-08 15:00,2014-02-01 15:00,2014-02-08 15:00,2014-02-01 15:00,2014-02-08 15:00,2015-04-16 15:00,2015-04-23 15:00,,PT_Normal,,,,,khz6FrRPeEKx/NENo7ev+w,,,,N,0,0,,,2014-04-13 07:21,2014-04-14 17:03,admin,admin,
2919,143016,6971,40079,7842,0,N,N,N,CP_Phys,TT_Task,DT_FixedDrtn,TK_NotStart,CZA-TK-2310-1160,"Cutting, Fit-up and Welding of Stairway Platform, Gratings and Handrails",8488,3770,2128,60,0,0,0,60,0,0,0,,,,2015-04-21 15:00,2015-04-28 15:00,,2014-02-05 15:00,2014-02-12 15:00,2014-02-05 15:00,2014-02-12 15:00,2014-02-05 15:00,2014-02-12 15:00,2015-04-21 15:00,2015-04-28 15:00,,PT_Normal,,,,,GqhXlnEIZkOKclV1meJkfQ,,,,N,0,0,,,2014-04-13 07:21,2014-04-14 17:03,admin,admin,
2920,143017,6971,40080,7842,0,N,N,N,CP_Phys,TT_Task,DT_FixedDrtn,TK_NotStart,CZA-TK-2310-1750,"Filling, Holding and Transfer/Draining of Water",8383,1512,0,140,0,5387.91314,5387.91314,140,0,0,0,,,,2015-05-09 15:00,2015-05-25 15:00,,2014-11-13 13:00,2014-11-30 13:00,2014-11-13 13:00,2014-11-30 13:00,2014-11-13 13:00,2014-11-30 13:00,2015-05-09 15:00,2015-05-25 15:00,,PT_Normal,,,,,LEVTmbvM70GApC3kni9Wkg,,,,N,0,0,,,2014-04-13 07:21,2014-04-14 16:04,admin,admin,
2921,143018,6971,40081,7842,0,N,N,N,CP_Phys,TT_Mile,DT_FixedDrtn,TK_NotStart,CZA-TK-2310-1170,Foundation Takeover From Client,,0,0,0,0,0,0,0,0,0,0,2014-03-27 00:00,,,2014-03-26 17:00,2014-03-26 17:00,,2014-03-27 07:00,2014-03-27 07:00,2014-03-27 07:00,2014-03-27 07:00,2014-03-27 07:00,2014-03-27 07:00,2014-03-26 17:00,2014-03-26 17:00,CS_MSO,PT_Normal,,,,,jjzPpMeTz0e+rROFKmD2lA,,,,N,0,0,,,2014-04-13 07:21,2014-04-13 07:42,admin,admin,
2922,143019,6971,40292,7842,0,N,N,N,CP_Phys,TT_Task,DT_FixedDrtn,TK_NotStart,CZA-TK-2310-1510,"Jacking, Erection and Fit-up",8383,1642,0,20,0,198.666574,198.666574,20,120,0,120,,,,2015-02-15 15:00,2015-02-17 15:00,,2014-08-07 13:00,2014-08-10 13:00,2014-08-07 13:00,2014-08-10 13:00,2014-08-07 13:00,2014-08-10 13:00,2015-02-15 15:00,2015-02-17 15:00,,PT_Normal,,,,,yunjhQK9pUy2Sb+cY0ClSQ,nGns/PJQHU6HSE2on+qBKQ,,,N,0,0,,,2014-04-13 07:21,2014-04-14 16:04,admin,admin,
2923,143020,6971,40292,7842,0,N,N,N,CP_Phys,TT_Task,DT_FixedDrtn,TK_NotStart,CZA-TK-2310-1520,Welding,8383,1642,0,70,0,248.333218,248.333218,70,350,0,350,,,,2015-02-17 15:00,2015-02-25 15:00,,2014-08-10 13:00,2014-08-18 13:00,2014-08-10 13:00,2014-08-18 13:00,2014-08-10 13:00,2014-08-18 13:00,2015-02-17 15:00,2015-02-25 15:00,,PT_Normal,,,,,jYGWe6sXY0CSH9u4DucNkw,wlN87yDOF0q2NR8Zcf9zrg,,,N,0,0,,,2014-04-13 07:21,2014-04-14 16:04,admin,admin,
2924,143021,6971,40292,7842,0,N,N,N,CP_Phys,TT_Task,DT_FixedDrtn,TK_NotStart,CZA-TK-2310-1530,Inspection,8383,1642,0,90,0,49.666644,49.666644,90,0,0,0,,,,2015-02-15 15:00,2015-02-25 15:00,,2014-08-07 13:00,2014-08-18 13:00,2014-08-07 13:00,2014-08-18 13:00,2014-08-07 13:00,2014-08-18 13:00,2015-02-15 15:00,2015-02-25 15:00,,PT_Normal,,,,,XlCt3apSB0iYaBhN2IyzbQ,Sc67/zYJg0CQbATURQsS3w,,,N,0,0,,,2014-04-13 07:21,2014-04-14 16:04,admin,admin,
2925,143022,6971,40293,7842,0,N,N,N,CP_Phys,TT_Task,DT_FixedDrtn,TK_NotStart,CZA-TK-2310-1180,Laying and Fit-up,8383,1642,0,10,0,173.358814,173.358814,10,60,0,60,,,,2014-10-06 15:00,2014-10-07 15:00,,2014-03-29 13:00,2014-03-30 13:00,2014-03-29 13:00,2014-03-30 13:00,2014-03-29 13:00,2014-03-30 13:00,2014-10-06 15:00,2014-10-07 15:00,,PT_Normal,,,,,5PoJmyYUhEOZJ+DwVAg8CQ,c2KXiFjsK0mlqevqojQdjQ,,,N,0,0,,,2014-04-13 07:21,2014-04-14 16:04,admin,admin,
2926,143023,6971,40293,7842,0,N,N,N,CP_Phys,TT_Task,DT_FixedDrtn,TK_NotStart,CZA-TK-2310-1190,Welding,8383,1642,0,40,0,216.698518,216.698518,40,160,0,160,,,,2014-10-07 15:00,2014-10-12 15:00,,2014-03-30 13:00,2014-04-03 13:00,2014-03-30 13:00,2014-04-03 13:00,2014-03-30 13:00,2014-04-03 13:00,2014-10-07 15:00,2014-10-12 15:00,,PT_Normal,,,,,uieDvZaFHE24XgXpR/U86A,dLKXBlQkrUOcX3y4HmHJdA,,,N,0,0,,,2014-04-13 07:21,2014-04-14 16:04,admin,admin,
2927,143024,6971,40293,7842,0,N,N,N,CP_Phys,TT_Task,DT_FixedDrtn,TK_NotStart,CZA-TK-2310-1200,Inspection,8383,1642,0,50,0,43.339704,43.339704,50,0,0,0,,,,2014-10-06 15:00,2014-10-12 15:00,,2014-03-29 13:00,2014-04-03 13:00,2014-03-29 13:00,2014-04-03 13:00,2014-03-29 13:00,2014-04-03 13:00,2014-10-06 15:00,2014-10-12 15:00,,PT_Normal,,,,,6t4Xi/YqAEmoRnVV+oe9dg,iycSCQz2CUW17u9CmgA+gw,,,N,0,0,,,2014-04-13 07:21,2014-04-14 16:04,admin,admin,
2928,143025,6971,40294,7842,0,N,N,N,CP_Phys,TT_Task,DT_FixedDrtn,TK_NotStart,CZA-TK-2310-1230,Inspection,8383,1642,0,160,0,127.422012,127.422012,160,0,0,0,,,,2014-10-12 15:00,2014-10-30 15:00,,2014-04-03 13:00,2014-04-22 13:00,2014-04-03 13:00,2014-04-22 13:00,2014-04-03 13:00,2014-04-22 13:00,2014-10-12 15:00,2014-10-30 15:00,,PT_Normal,,,,,2KTVc0Rd206F1HeCRKoTzg,4zvcPjxie0yx2k8xFEZ6CQ,,,N,0,0,,,2014-04-13 07:21,2014-04-14 16:04,admin,admin,
2929,143026,6971,40294,7842,0,N,N,N,CP_Phys,TT_Task,DT_FixedDrtn,TK_NotStart,CZA-TK-2310-1210,Laying and Fit-up,8383,1642,0,40,0,509.688046,509.688046,40,240,0,240,,,,2014-10-12 15:00,2014-10-16 15:00,,2014-04-03 13:00,2014-04-08 13:00,2014-04-03 13:00,2014-04-08 13:00,2014-04-03 13:00,2014-04-08 13:00,2014-10-12 15:00,2014-10-16 15:00,,PT_Normal,,,,,tF97CilVrUmyYYiM6A97Tw,CBgIHeJZ00q910C1/skHkg,,,N,0,0,,,2014-04-13 07:21,2014-04-14 16:04,admin,admin,
2930,143027,6971,40294,7842,0,N,N,N,CP_Phys,TT_Task,DT_FixedDrtn,TK_NotStart,CZA-TK-2310-1220,Welding,8383,1642,0,120,0,637.110058,637.110058,120,600,0,600,,,,2014-10-16 15:00,2014-10-30 15:00,,2014-04-08 13:00,2014-04-22 13:00,2014-04-08 13:00,2014-04-22 13:00,2014-04-08 13:00,2014-04-22 13:00,2014-10-16 15:00,2014-10-30 15:00,,PT_Normal,,,,,LrEZg+I2xUK7SeBcIGeR6w,nhSGdjBsJEio3IXBnNswvw,,,N,0,0,,,2014-04-13 07:21,2014-04-14 16:04,admin,admin,
2931,143028,6971,40295,7842,0,N,N,N,CP_Phys,TT_Task,DT_FixedDrtn,TK_NotStart,CZA-TK-2310-1330,Erection and Fit-up,8383,1642,0,20,0,0,0,20,120,0,120,,,,2014-11-27 15:00,2014-11-30 15:00,,2014-05-20 13:00,2014-05-22 13:00,2014-05-20 13:00,2014-05-22 13:00,2014-05-20 13:00,2014-05-22 13:00,2014-11-27 15:00,2014-11-30 15:00,,PT_Normal,,,,,ob0AfAgn80mAg3RdLQbVxw,ji6Qm/R0E0OX7P+koXgpkg,,,N,0,0,,,2014-04-13 07:21,2014-04-14 16:04,admin,admin,
2932,143029,6971,40295,7842,0,N,N,N,CP_Phys,TT_Task,DT_FixedDrtn,TK_NotStart,CZA-TK-2310-1340,Welding,8383,1642,0,30,0,0,0,30,120,0,120,,,,2014-11-30 15:00,2014-12-03 15:00,,2014-05-22 13:00,2014-05-26 13:00,2014-05-22 13:00,2014-05-26 13:00,2014-05-22 13:00,2014-05-26 13:00,2014-11-30 15:00,2014-12-03 15:00,,PT_Normal,,,,,ZIwJOGtZKUi4O6yOR6YXFA,uTnl+VVXD0aLHSKgHbcaIg,,,N,0,0,,,2014-04-13 07:21,2014-04-14 16:04,admin,admin,
2933,143030,6971,40295,7842,0,N,N,N,CP_Phys,TT_Task,DT_FixedDrtn,TK_NotStart,CZA-TK-2310-1350,Inspection,8383,1642,0,50,0,0,0,50,0,0,0,,,,2014-11-27 15:00,2014-12-03 15:00,,2014-05-20 13:00,2014-05-26 13:00,2014-05-20 13:00,2014-05-26 13:00,2014-05-20 13:00,2014-05-26 13:00,2014-11-27 15:00,2014-12-03 15:00,,PT_Normal,,,,,x5gGBTFN3kW6Xenoe03iow,nsiyqW21k0GzrCvx7XobLw,,,N,0,0,,,2014-04-13 07:21,2014-04-14 16:04,admin,admin,
2934,143031,6971,40296,7842,0,N,N,N,CP_Phys,TT_Task,DT_FixedDrtn,TK_NotStart,CZA-TK-2310-1360,Erection and Fit-up,8383,1642,0,40,0,505.469911,505.469911,40,240,0,240,,,,2014-12-03 15:00,2014-12-08 15:00,,2014-05-26 13:00,2014-05-31 13:00,2014-05-26 13:00,2014-05-31 13:00,2014-05-26 13:00,2014-05-31 13:00,2014-12-03 15:00,2014-12-08 15:00,,PT_Normal,,,,,Z1HHC10/H0ebcoQ842H1aA,Xsu4Amsznk2lSLejy6KNdA,,,N,0,0,,,2014-04-13 07:21,2014-04-14 16:04,admin,admin,
2935,143032,6971,40296,7842,0,N,N,N,CP_Phys,TT_Task,DT_FixedDrtn,TK_NotStart,CZA-TK-2310-1370,Welding,8383,1642,0,120,0,631.837389,631.837389,120,480,0,480,,,,2014-12-08 15:00,2014-12-22 15:00,,2014-05-31 13:00,2014-06-14 13:00,2014-05-31 13:00,2014-06-14 13:00,2014-05-31 13:00,2014-06-14 13:00,2014-12-08 15:00,2014-12-22 15:00,,PT_Normal,,,,,hW1DAje56UuiTqp/62JFHw,39naTzukiEGQjDgCfSNIVw,,,N,0,0,,,2014-04-13 07:21,2014-04-14 16:04,admin,admin,
2936,143033,6971,40296,7842,0,N,N,N,CP_Phys,TT_Task,DT_FixedDrtn,TK_NotStart,CZA-TK-2310-1380,Inspection,8383,1642,0,160,0,126.367478,126.367478,160,0,0,0,,,,2014-12-03 15:00,2014-12-22 15:00,,2014-05-26 13:00,2014-06-14 13:00,2014-05-26 13:00,2014-06-14 13:00,2014-05-26 13:00,2014-06-14 13:00,2014-12-03 15:00,2014-12-22 15:00,,PT_Normal,,,,,e9KzQC41Y06s7HBDN7XjRw,3czPv0gF3k+wMBqw36NoRw,,,N,0,0,,,2014-04-13 07:21,2014-04-14 16:04,admin,admin,
2937,143034,6971,40297,7842,0,N,N,N,CP_Phys,TT_Task,DT_FixedDrtn,TK_NotStart,CZA-TK-2310-1390,Laying and Fit-up,8383,1642,0,20,0,498.775634,498.775634,20,120,0,120,,,,2014-12-22 15:00,2014-12-24 15:00,,2014-06-14 13:00,2014-06-16 13:00,2014-06-14 13:00,2014-06-16 13:00,2014-06-14 13:00,2014-06-16 13:00,2014-12-22 15:00,2014-12-24 15:00,,PT_Normal,,,,,/IUXO7Wmdk+Tg0IQaRHz0g,VTA2NwHMx0+rcjnOwY7AXg,,,N,0,0,,,2014-04-13 07:21,2014-04-14 16:04,admin,admin,
2938,143035,6971,40297,7842,0,N,N,N,CP_Phys,TT_Task,DT_FixedDrtn,TK_NotStart,CZA-TK-2310-1400,Welding,8383,1642,0,100,0,623.469543,623.469543,100,400,0,400,,,,2014-12-24 15:00,2015-01-05 15:00,,2014-06-16 13:00,2014-06-28 13:00,2014-06-16 13:00,2014-06-28 13:00,2014-06-16 13:00,2014-06-28 13:00,2014-12-24 15:00,2015-01-05 15:00,,PT_Normal,,,,,xHUX8FZ6V0OM0DiXq0Hu6w,JDp3+wBI+k2O+LUixdSfkA,,,N,0,0,,,2014-04-13 07:21,2014-04-14 16:04,admin,admin,
2939,143036,6971,40297,7842,0,N,N,N,CP_Phys,TT_Task,DT_FixedDrtn,TK_NotStart,CZA-TK-2310-1410,Inspection,8383,1642,0,120,0,124.693909,124.693909,120,0,0,0,,,,2014-12-22 15:00,2015-01-05 15:00,,2014-06-14 13:00,2014-06-28 13:00,2014-06-14 13:00,2014-06-28 13:00,2014-06-14 13:00,2014-06-28 13:00,2014-12-22 15:00,2015-01-05 15:00,,PT_Normal,,,,,fqX2XOCtK0K7dld4Aqdf+Q,SiA1irE4806nGEjP6RTDDw,,,N,0,0,,,2014-04-13 07:21,2014-04-14 16:04,admin,admin,
2940,143037,6971,40298,7842,0,N,N,N,CP_Phys,TT_Task,DT_FixedDrtn,TK_NotStart,CZA-TK-2310-1420,Laying and Fit-up,8383,1642,0,20,0,0,0,20,120,0,120,,,,2015-01-05 15:00,2015-01-07 15:00,,2014-06-28 13:00,2014-06-30 13:00,2014-06-28 13:00,2014-06-30 13:00,2014-06-28 13:00,2014-06-30 13:00,2015-01-05 15:00,2015-01-07 15:00,,PT_Normal,,,,,GJa87bxbf0mn40IEICkm3g,G6b42Tp51kqq60TqYxmkGQ,,,N,0,0,,,2014-04-13 07:21,2014-04-14 16:04,admin,admin,
2941,143038,6971,40298,7842,0,N,N,N,CP_Phys,TT_Task,DT_FixedDrtn,TK_NotStart,CZA-TK-2310-1430,Welding,8383,1642,0,100,0,0,0,100,400,0,400,,,,2015-01-07 15:00,2015-01-19 15:00,,2014-06-30 13:00,2014-07-12 13:00,2014-06-30 13:00,2014-07-12 13:00,2014-06-30 13:00,2014-07-12 13:00,2015-01-07 15:00,2015-01-19 15:00,,PT_Normal,,,,,vomAUqraTEaLK7OXNWxfzA,m4F75rL57EuQ+iacx15bow,,,N,0,0,,,2014-04-13 07:21,2014-04-14 16:04,admin,admin,
2942,143039,6971,40298,7842,0,N,N,N,CP_Phys,TT_Task,DT_FixedDrtn,TK_NotStart,CZA-TK-2310-1440,Inspection,8383,1642,0,120,0,0,0,120,0,0,0,,,,2015-01-05 15:00,2015-01-19 15:00,,2014-06-28 13:00,2014-07-12 13:00,2014-06-28 13:00,2014-07-12 13:00,2014-06-28 13:00,2014-07-12 13:00,2015-01-05 15:00,2015-01-19 15:00,,PT_Normal,,,,,uWWdDn+13UmHDjMqSAz4qQ,lmVJMVg1NUm4xeM1G7WrEA,,,N,0,0,,,2014-04-13 07:21,2014-04-14 16:04,admin,admin,
2943,143040,6971,40508,7842,0,N,N,N,CP_Phys,TT_Task,DT_FixedDrtn,TK_NotStart,CZA-TK-2310-1450,"Cutting,lnstallation and Fit-up",8383,1642,0,30,0,0,0,30,180,0,180,,,,2015-01-19 15:00,2015-01-22 15:00,,2014-07-12 13:00,2014-07-15 13:00,2014-07-12 13:00,2014-07-15 13:00,2014-07-12 13:00,2014-07-15 13:00,2015-01-19 15:00,2015-01-22 15:00,,PT_Normal,,,,,1oZf491+3k2LK4tBOrEvLw,ezmWHjSc9EKI06arJGVzDg,,,N,0,0,,,2014-04-13 07:21,2014-04-14 16:04,admin,admin,
2944,143041,6971,40508,7842,0,N,N,N,CP_Phys,TT_Task,DT_FixedDrtn,TK_NotStart,CZA-TK-2310-1460,Welding,8383,1642,0,60,0,0,0,60,240,0,240,,,,2015-01-22 15:00,2015-01-29 15:00,,2014-07-15 13:00,2014-07-22 13:00,2014-07-15 13:00,2014-07-22 13:00,2014-07-15 13:00,2014-07-22 13:00,2015-01-22 15:00,2015-01-29 15:00,,PT_Normal,,,,,Pa5VWT/9kUOWaxYhufMZwQ,z23R9pxJrEqFekZF6gtZZw,,,N,0,0,,,2014-04-13 07:21,2014-04-14 16:04,admin,admin,
2945,143042,6971,40508,7842,0,N,N,N,CP_Phys,TT_Task,DT_FixedDrtn,TK_NotStart,CZA-TK-2310-1470,Inspection,8383,1642,0,90,0,0,0,90,0,0,0,,,,2015-01-19 15:00,2015-01-29 15:00,,2014-07-12 13:00,2014-07-22 13:00,2014-07-12 13:00,2014-07-22 13:00,2014-07-12 13:00,2014-07-22 13:00,2015-01-19 15:00,2015-01-29 15:00,,PT_Normal,,,,,BTd3wFP30k+3dg3tNScH2A,DRSCjaDfpEqVTQvS7czjjw,,,N,0,0,,,2014-04-13 07:21,2014-04-14 16:04,admin,admin,
2946,143043,6971,40509,7842,0,N,N,N,CP_Phys,TT_Task,DT_FixedDrtn,TK_NotStart,CZA-TK-2310-1480,Erection and Fit-up,8383,1642,0,40,0,0,0,40,240,0,240,,,,2015-01-29 15:00,2015-02-03 15:00,,2014-07-22 13:00,2014-07-27 13:00,2014-07-22 13:00,2014-07-27 13:00,2014-07-22 13:00,2014-07-27 13:00,2015-01-29 15:00,2015-02-03 15:00,,PT_Normal,,,,,Lpss62XGd0O/bNX20cQJuw,CpzeiptQbEqyrrRczPCO3g,,,N,0,0,,,2014-04-13 07:21,2014-04-14 16:04,admin,admin,
2947,143044,6971,40509,7842,0,N,N,N,CP_Phys,TT_Task,DT_FixedDrtn,TK_NotStart,CZA-TK-2310-1490,Welding,8383,1642,0,100,0,0,0,100,400,0,400,,,,2015-02-03 15:00,2015-02-15 15:00,,2014-07-27 13:00,2014-08-07 13:00,2014-07-27 13:00,2014-08-07 13:00,2014-07-27 13:00,2014-08-07 13:00,2015-02-03 15:00,2015-02-15 15:00,,PT_Normal,,,,,3zelygRcRUuLKMM5eB9ofg,/1BL1/GL1UaGh3zp01XdHQ,,,N,0,0,,,2014-04-13 07:21,2014-04-14 16:04,admin,admin,
2948,143045,6971,40509,7842,0,N,N,N,CP_Phys,TT_Task,DT_FixedDrtn,TK_NotStart,CZA-TK-2310-1500,Inspection,8383,1642,0,140,0,0,0,140,0,0,0,,,,2015-01-29 15:00,2015-02-15 15:00,,2014-07-22 13:00,2014-08-07 13:00,2014-07-22 13:00,2014-08-07 13:00,2014-07-22 13:00,2014-08-07 13:00,2015-01-29 15:00,2015-02-15 15:00,,PT_Normal,,,,,wMquZpkd+0Sme8FdjVDEkQ,90XTdK3GmE+N4EktOr/HGA,,,N,0,0,,,2014-04-13 07:21,2014-04-14 16:04,admin,admin,
2949,143046,6971,40510,7842,0,N,N,N,CP_Phys,TT_Task,DT_FixedDrtn,TK_NotStart,CZA-TK-2310-1540,"Jacking,Erection and Fit-up",8383,1642,0,20,0,248.218302,248.218302,20,120,0,120,,,,2015-02-25 15:00,2015-02-28 15:00,,2014-08-18 13:00,2014-08-20 13:00,2014-08-18 13:00,2014-08-20 13:00,2014-08-18 13:00,2014-08-20 13:00,2015-02-25 15:00,2015-02-28 15:00,,PT_Normal,,,,,1606JJkZsECAeuL8KNaHjA,Opo/vB7CnECkyq66/fiETA,,,N,0,0,,,2014-04-13 07:21,2014-04-14 16:04,admin,admin,
2950,143047,6971,40510,7842,0,N,N,N,CP_Phys,TT_Task,DT_FixedDrtn,TK_NotStart,CZA-TK-2310-1550,Welding,8383,1642,0,70,0,310.272877,310.272877,70,350,0,350,,,,2015-02-28 15:00,2015-03-08 15:00,,2014-08-20 13:00,2014-08-28 13:00,2014-08-20 13:00,2014-08-28 13:00,2014-08-20 13:00,2014-08-28 13:00,2015-02-28 15:00,2015-03-08 15:00,,PT_Normal,,,,,xNoe+Hoa/0Kb78wCmnrTaQ,Pq7CkE+p9E6W0HGOr0dT6w,,,N,0,0,,,2014-04-13 07:21,2014-04-14 16:04,admin,admin,
2951,143048,6971,40510,7842,0,N,N,N,CP_Phys,TT_Task,DT_FixedDrtn,TK_NotStart,CZA-TK-2310-1560,Inspection,8383,1642,0,90,0,62.054575,62.054575,90,0,0,0,,,,2015-02-25 15:00,2015-03-08 15:00,,2014-08-18 13:00,2014-08-28 13:00,2014-08-18 13:00,2014-08-28 13:00,2014-08-18 13:00,2014-08-28 13:00,2015-02-25 15:00,2015-03-08 15:00,,PT_Normal,,,,,DytZSWl7zE2wHBtRUn/Puw,2g4lO/xb2UOG0Bm+Ihd33Q,,,N,0,0,,,2014-04-13 07:21,2014-04-14 16:04,admin,admin,
2952,143049,6971,40511,7842,0,N,N,N,CP_Phys,TT_Task,DT_FixedDrtn,TK_NotStart,CZA-TK-2310-1240,Erection and Fit-up,8383,1642,0,20,0,148.983514,148.983514,20,120,0,120,,,,2014-10-30 15:00,2014-11-02 15:00,,2014-04-22 13:00,2014-04-24 13:00,2014-04-22 13:00,2014-04-24 13:00,2014-04-22 13:00,2014-04-24 13:00,2014-10-30 15:00,2014-11-02 15:00,,PT_Normal,,,,,o/9kuxRdHEGpjZoUXfCHNg,N29KqX98pE2MPHBMA4U7tw,,,N,0,0,,,2014-04-13 07:21,2014-04-14 16:04,admin,admin,
2953,143050,6971,40511,7842,0,N,N,N,CP_Phys,TT_Task,DT_FixedDrtn,TK_NotStart,CZA-TK-2310-1250,Welding,8383,1642,0,70,0,186.229393,186.229393,70,350,0,350,,,,2014-11-02 15:00,2014-11-10 15:00,,2014-04-24 13:00,2014-05-03 13:00,2014-04-24 13:00,2014-05-03 13:00,2014-04-24 13:00,2014-05-03 13:00,2014-11-02 15:00,2014-11-10 15:00,,PT_Normal,,,,,HPrKhalbD0+kKdUrY7fXgg,QaY8V96fQk+PyfiQW1lucA,,,N,0,0,,,2014-04-13 07:21,2014-04-14 16:04,admin,admin,
2954,143051,6971,40511,7842,0,N,N,N,CP_Phys,TT_Task,DT_FixedDrtn,TK_NotStart,CZA-TK-2310-1260,Inspection,8383,1642,0,90,0,37.245879,37.245879,90,0,0,0,,,,2014-10-30 15:00,2014-11-10 15:00,,2014-04-22 13:00,2014-05-03 13:00,2014-04-22 13:00,2014-05-03 13:00,2014-04-22 13:00,2014-05-03 13:00,2014-10-30 15:00,2014-11-10 15:00,,PT_Normal,,,,,9UO6/71tl0OqsbFrZLACTA,SABiN3rjaUqfyE78Z6L1nA,,,N,0,0,,,2014-04-13 07:21,2014-04-14 16:04,admin,admin,
2955,143052,6971,40303,7842,0,N,N,N,CP_Phys,TT_Task,DT_FixedDrtn,TK_NotStart,CZA-TK-2310-1570,"Jacking,Erection and Fit-up",8383,1642,0,20,0,297.914495,297.914495,20,120,0,120,,,,2015-03-08 15:00,2015-03-10 15:00,,2014-08-28 13:00,2014-08-31 13:00,2014-08-28 13:00,2014-08-31 13:00,2014-08-28 13:00,2014-08-31 13:00,2015-03-08 15:00,2015-03-10 15:00,,PT_Normal,,,,,diIOsJbZ00mlLbO1RGCpEg,lC8HY+YyYkKYWUTXIDmSnw,,,N,0,0,,,2014-04-13 07:21,2014-04-14 16:04,admin,admin,
2956,143053,6971,40303,7842,0,N,N,N,CP_Phys,TT_Task,DT_FixedDrtn,TK_NotStart,CZA-TK-2310-1580,Welding,8383,1642,0,70,0,372.393119,372.393119,70,350,0,350,,,,2015-03-10 15:00,2015-03-18 15:00,,2014-08-31 13:00,2014-09-08 13:00,2014-08-31 13:00,2014-09-08 13:00,2014-08-31 13:00,2014-09-08 13:00,2015-03-10 15:00,2015-03-18 15:00,,PT_Normal,,,,,Bqwa7O4BhEyDQGli0F7tFw,IZVO6SqqUk+jALowHFEIEg,,,N,0,0,,,2014-04-13 07:21,2014-04-14 16:04,admin,admin,
2957,143054,6971,40303,7842,0,N,N,N,CP_Phys,TT_Task,DT_FixedDrtn,TK_NotStart,CZA-TK-2310-1590,Inspection,8383,1642,0,90,0,74.478624,74.478624,90,0,0,0,,,,2015-03-08 15:00,2015-03-18 15:00,,2014-08-28 13:00,2014-09-08 13:00,2014-08-28 13:00,2014-09-08 13:00,2014-08-28 13:00,2014-09-08 13:00,2015-03-08 15:00,2015-03-18 15:00,,PT_Normal,,,,,/0hldSlgrUul7HTAiZJ8Lg,1/afePjB+kyg5pqhvvFkBw,,,N,0,0,,,2014-04-13 07:21,2014-04-14 16:04,admin,admin,
2958,143055,6971,40304,7842,0,N,N,N,CP_Phys,TT_Task,DT_FixedDrtn,TK_NotStart,CZA-TK-2310-1600,"Jacking, Erection and Fit-up",8383,1642,0,20,0,347.610689,347.610689,20,120,0,120,,,,2015-03-18 15:00,2015-03-21 15:00,,2014-09-08 13:00,2014-09-10 13:00,2014-09-08 13:00,2014-09-10 13:00,2014-09-08 13:00,2014-09-10 13:00,2015-03-18 15:00,2015-03-21 15:00,,PT_Normal,,,,,SrayD9MBc0eX5hoo3+diRQ,iH2C7Hon3EG2bG5yhQGT9w,,,N,0,0,,,2014-04-13 07:21,2014-04-14 16:04,admin,admin,
2959,143056,6971,40304,7842,0,N,N,N,CP_Phys,TT_Task,DT_FixedDrtn,TK_NotStart,CZA-TK-2310-1610,Welding,8383,1642,0,70,0,434.513361,434.513361,70,350,0,350,,,,2015-03-21 15:00,2015-03-29 15:00,,2014-09-10 13:00,2014-09-18 13:00,2014-09-10 13:00,2014-09-18 13:00,2014-09-10 13:00,2014-09-18 13:00,2015-03-21 15:00,2015-03-29 15:00,,PT_Normal,,,,,Yv652NaSh0ubKmNgmFLEAw,a3028kIdA0yi2UtZFRkeyw,,,N,0,0,,,2014-04-13 07:21,2014-04-14 16:04,admin,admin,
2960,143057,6971,40304,7842,0,N,N,N,CP_Phys,TT_Task,DT_FixedDrtn,TK_NotStart,CZA-TK-2310-1620,Inspection,8383,1642,0,90,0,86.902672,86.902672,90,0,0,0,,,,2015-03-18 15:00,2015-03-29 15:00,,2014-09-08 13:00,2014-09-18 13:00,2014-09-08 13:00,2014-09-18 13:00,2014-09-08 13:00,2014-09-18 13:00,2015-03-18 15:00,2015-03-29 15:00,,PT_Normal,,,,,JOhT5eAYN0qp41JfgcF5Hw,Hf/C7xJo4UebW1ua2YtKRg,,,N,0,0,,,2014-04-13 07:21,2014-04-14 16:04,admin,admin,
2961,143058,6971,40305,7842,0,N,N,N,CP_Phys,TT_Task,DT_FixedDrtn,TK_NotStart,CZA-TK-2310-1270,Erection and Fit-up,8383,1642,0,20,0,101.881136,101.881136,20,120,0,120,,,,2014-11-10 15:00,2014-11-12 15:00,,2014-05-03 13:00,2014-05-05 13:00,2014-05-03 13:00,2014-05-05 13:00,2014-05-03 13:00,2014-05-05 13:00,2014-11-10 15:00,2014-11-12 15:00,,PT_Normal,,,,,Jo0A+ioNL0ek8qgISH3zJw,3fPqQQAKF0GTJhDBG9nKmA,,,N,0,0,,,2014-04-13 07:21,2014-04-14 16:04,admin,admin,
2962,143059,6971,40305,7842,0,N,N,N,CP_Phys,TT_Task,DT_FixedDrtn,TK_NotStart,CZA-TK-2310-1280,Welding,8383,1642,0,70,0,127.35142,127.35142,70,350,0,350,,,,2014-11-12 15:00,2014-11-20 15:00,,2014-05-05 13:00,2014-05-13 13:00,2014-05-05 13:00,2014-05-13 13:00,2014-05-05 13:00,2014-05-13 13:00,2014-11-12 15:00,2014-11-20 15:00,,PT_Normal,,,,,EguCoBM4/EehLseVOjBr0w,8kfjnyp7mU2RdBiocdX3GA,,,N,0,0,,,2014-04-13 07:21,2014-04-14 16:04,admin,admin,
2963,143060,6971,40305,7842,0,N,N,N,CP_Phys,TT_Task,DT_FixedDrtn,TK_NotStart,CZA-TK-2310-1290,Inspection,8383,1642,0,90,0,25.470284,25.470284,90,0,0,0,,,,2014-11-10 15:00,2014-11-20 15:00,,2014-05-03 13:00,2014-05-13 13:00,2014-05-03 13:00,2014-05-13 13:00,2014-05-03 13:00,2014-05-13 13:00,2014-11-10 15:00,2014-11-20 15:00,,PT_Normal,,,,,PtNT4r1fX0uaLI4vBt2Bpw,1D4k2rwQZE6LcHJ9SMMB1A,,,N,0,0,,,2014-04-13 07:21,2014-04-14 16:04,admin,admin,
2964,143061,6971,40515,7842,0,N,N,N,CP_Phys,TT_Task,DT_FixedDrtn,TK_NotStart,CZA-TK-2310-1310,Welding,8383,1642,0,40,0,0,0,40,160,0,160,,,,2014-11-23 15:00,2014-11-27 15:00,,2014-05-15 13:00,2014-05-20 13:00,2014-05-15 13:00,2014-05-20 13:00,2014-05-15 13:00,2014-05-20 13:00,2014-11-23 15:00,2014-11-27 15:00,,PT_Normal,,,,,TXeYjD4RNUGSreXWMc9XzA,9hCu5+amEkKA9rNllIim9g,,,N,0,0,,,2014-04-13 07:21,2014-04-14 16:04,admin,admin,
2965,143062,6971,40515,7842,0,N,N,N,CP_Phys,TT_Task,DT_FixedDrtn,TK_NotStart,CZA-TK-2310-1320,Inspection,8383,1642,0,60,0,0,0,60,0,0,0,,,,2014-11-20 15:00,2014-11-27 15:00,,2014-05-13 13:00,2014-05-20 13:00,2014-05-13 13:00,2014-05-20 13:00,2014-05-13 13:00,2014-05-20 13:00,2014-11-20 15:00,2014-11-27 15:00,,PT_Normal,,,,,vUk39adSEUSDPin/YNJEcg,GEH/Gtn/Q0qvgpNBuVSm9A,,,N,0,0,,,2014-04-13 07:21,2014-04-14 16:04,admin,admin,
2966,143063,6971,40515,7842,0,N,N,N,CP_Phys,TT_Task,DT_FixedDrtn,TK_NotStart,CZA-TK-2310-1300,"Cutting, Installation and Fit-up",8383,1642,0,20,0,0,0,20,120,0,120,,,,2014-11-20 15:00,2014-11-23 15:00,,2014-05-13 13:00,2014-05-15 13:00,2014-05-13 13:00,2014-05-15 13:00,2014-05-13 13:00,2014-05-15 13:00,2014-11-20 15:00,2014-11-23 15:00,,PT_Normal,,,,,z9x9nKppaEekcKYVGxBcGw,LEMGnzt0PkCpO8RClU4Sjg,,,N,0,0,,,2014-04-13 07:21,2014-04-14 16:04,admin,admin,
2967,143064,6971,40516,7842,0,N,N,N,CP_Phys,TT_Task,DT_FixedDrtn,TK_NotStart,CZA-TK-2310-1630,"Jacking, Erection and Fit-up",8383,1642,0,20,0,511.025011,511.025011,20,120,0,120,,,,2015-03-29 15:00,2015-03-31 15:00,,2014-09-18 13:00,2014-09-21 13:00,2014-09-18 13:00,2014-09-21 13:00,2014-09-18 13:00,2014-09-21 13:00,2015-03-29 15:00,2015-03-31 15:00,,PT_Normal,,,,,fGxNEeFu2Ey0EesrQPbrow,JeZTCCqKFUqZO6YYgdH9jw,,,N,0,0,,,2014-04-13 07:21,2014-04-14 16:04,admin,admin,
2968,143065,6971,40516,7842,0,N,N,N,CP_Phys,TT_Task,DT_FixedDrtn,TK_NotStart,CZA-TK-2310-1640,Welding,8383,1642,0,70,0,638.781263,638.781263,70,350,0,350,,,,2015-03-31 15:00,2015-04-08 15:00,,2014-09-21 13:00,2014-09-29 13:00,2014-09-21 13:00,2014-09-29 13:00,2014-09-21 13:00,2014-09-29 13:00,2015-03-31 15:00,2015-04-08 15:00,,PT_Normal,,,,,KZZW2W5uw0SpeYBMuDcuhA,KgWJF7mtZESg6wXyr/lzLg,,,N,0,0,,,2014-04-13 07:21,2014-04-14 16:04,admin,admin,
2969,143066,6971,40516,7842,0,N,N,N,CP_Phys,TT_Task,DT_FixedDrtn,TK_NotStart,CZA-TK-2310-1650,Inspection,8383,1642,0,90,0,127.756253,127.756253,90,0,0,0,,,,2015-03-29 15:00,2015-04-08 15:00,,2014-09-18 13:00,2014-09-29 13:00,2014-09-18 13:00,2014-09-29 13:00,2014-09-18 13:00,2014-09-29 13:00,2015-03-29 15:00,2015-04-08 15:00,,PT_Normal,,,,,zBnWn72rIkeNJ7ZeJUdW7g,APh4smzqxUGuECdP9XImjw,,,N,0,0,,,2014-04-13 07:21,2014-04-14 16:04,admin,admin,
2970,143067,6971,40517,7842,0,N,N,N,CP_Phys,TT_Task,DT_FixedDrtn,TK_NotStart,CZA-TK-2310-1660,"Jacking, Erection and Fit-up",8383,1642,0,20,0,669.681815,669.681815,20,120,0,120,,,,2015-04-08 15:00,2015-04-11 15:00,,2014-09-29 13:00,2014-10-01 13:00,2014-09-29 13:00,2014-10-01 13:00,2014-09-29 13:00,2014-10-01 13:00,2015-04-08 15:00,2015-04-11 15:00,,PT_Normal,,,,,76GQ6kdXS0yEf+TegwzPlw,AnbYtMbTBkCaZCDhM8ZNqQ,,,N,0,0,,,2014-04-13 07:21,2014-04-14 16:04,admin,admin,
2971,143068,6971,40517,7842,0,N,N,N,CP_Phys,TT_Task,DT_FixedDrtn,TK_NotStart,CZA-TK-2310-1670,Welding,8383,1642,0,70,0,837.102269,837.102269,70,350,0,350,,,,2015-04-11 15:00,2015-04-19 15:00,,2014-10-01 13:00,2014-10-09 13:00,2014-10-01 13:00,2014-10-09 13:00,2014-10-01 13:00,2014-10-09 13:00,2015-04-11 15:00,2015-04-19 15:00,,PT_Normal,,,,,j/TVClXAJkGUZlLmYy1uqg,9vTqZHyTjEKARizVpCBHmQ,,,N,0,0,,,2014-04-13 07:21,2014-04-14 16:04,admin,admin,
2972,143069,6971,40517,7842,0,N,N,N,CP_Phys,TT_Task,DT_FixedDrtn,TK_NotStart,CZA-TK-2310-1680,Inspection,8383,1642,0,90,0,167.420454,167.420454,90,0,0,0,,,,2015-04-08 15:00,2015-04-19 15:00,,2014-09-29 13:00,2014-10-09 13:00,2014-09-29 13:00,2014-10-09 13:00,2014-09-29 13:00,2014-10-09 13:00,2015-04-08 15:00,2015-04-19 15:00,,PT_Normal,,,,,hxE5e2pvoUWjQc3t6I+qYg,LabMNqUOpESjz4PF2c8f6A,,,N,0,0,,,2014-04-13 07:21,2014-04-14 16:04,admin,admin,
2973,143070,6971,40518,7842,0,N,N,N,CP_Phys,TT_Task,DT_FixedDrtn,TK_NotStart,CZA-TK-2310-1690,"Lay-out, Cutting, and Fit-up",8383,1642,0,40,0,51.298449,51.298449,40,240,0,240,,,,2015-04-19 15:00,2015-04-23 15:00,,2014-10-09 13:00,2014-10-14 13:00,2014-10-09 13:00,2014-10-14 13:00,2014-10-09 13:00,2014-10-14 13:00,2015-04-19 15:00,2015-04-23 15:00,,PT_Normal,,,,,RycyHITbh0Cjwt0aPOaDcA,qdgcy8x8wk254Kihb4bLnQ,,,N,0,0,,,2014-04-13 07:21,2014-04-14 16:04,admin,admin,
2974,143071,6971,40518,7842,0,N,N,N,CP_Phys,TT_Task,DT_FixedDrtn,TK_NotStart,CZA-TK-2310-1700,Welding,8383,1642,0,80,0,64.123061,64.123061,80,320,0,320,,,,2015-04-23 15:00,2015-05-03 15:00,,2014-10-14 13:00,2014-10-23 13:00,2014-10-14 13:00,2014-10-23 13:00,2014-10-14 13:00,2014-10-23 13:00,2015-04-23 15:00,2015-05-03 15:00,,PT_Normal,,,,,7apNcs40kkmc/m+CF736Jw,Ss605yZfs0umsA/moI//bw,,,N,0,0,,,2014-04-13 07:21,2014-04-14 16:04,admin,admin,
2975,143072,6971,40518,7842,0,N,N,N,CP_Phys,TT_Task,DT_FixedDrtn,TK_NotStart,CZA-TK-2310-1710,Inspection,8383,1642,0,120,0,12.824612,12.824612,120,0,0,0,,,,2015-04-19 15:00,2015-05-03 15:00,,2014-10-09 13:00,2014-10-23 13:00,2014-10-09 13:00,2014-10-23 13:00,2014-10-09 13:00,2014-10-23 13:00,2015-04-19 15:00,2015-05-03 15:00,,PT_Normal,,,,,hV3KV8SKLEmjqQNNObXs5g,vZsK2M8dIEexurqBe8uz5A,,,N,0,0,,,2014-04-13 07:21,2014-04-14 16:04,admin,admin,
2976,143073,6971,40519,7842,0,N,N,N,CP_Phys,TT_Task,DT_FixedDrtn,TK_NotStart,CZA-TK-2310-1720,Erection and Fit-up,8383,1642,0,20,0,0,0,20,120,0,120,,,,2015-04-28 15:00,2015-04-30 15:00,,2014-10-19 13:00,2014-10-21 13:00,2014-10-19 13:00,2014-10-21 13:00,2014-10-19 13:00,2014-10-21 13:00,2015-04-28 15:00,2015-04-30 15:00,,PT_Normal,,,,,sofirGzvM0+VOEGjmZmgnQ,Tdg7+EbGO06eti8ed5pUTg,,,N,0,0,,,2014-04-13 07:21,2014-04-14 16:04,admin,admin,
2977,143074,6971,40519,7842,0,N,N,N,CP_Phys,TT_Task,DT_FixedDrtn,TK_NotStart,CZA-TK-2310-1730,Welding,8383,1642,0,70,0,0,0,70,280,0,280,,,,2015-04-30 15:00,2015-05-09 15:00,,2014-10-21 13:00,2014-10-29 13:00,2014-10-21 13:00,2014-10-29 13:00,2014-10-21 13:00,2014-10-29 13:00,2015-04-30 15:00,2015-05-09 15:00,,PT_Normal,,,,,QoOIOzjAoEq/Kvn2hJOQxg,CL0J/93U/UaJ4v4e+IcB8A,,,N,0,0,,,2014-04-13 07:21,2014-04-14 16:04,admin,admin,
2978,143075,6971,40519,7842,0,N,N,N,CP_Phys,TT_Task,DT_FixedDrtn,TK_NotStart,CZA-TK-2310-1740,Inspection,8383,1642,130,90,0,0,0,90,0,0,0,,,,2015-04-28 15:00,2015-05-09 15:00,,2014-10-19 13:00,2014-10-29 13:00,2014-10-19 13:00,2014-10-29 13:00,2014-10-19 13:00,2014-10-29 13:00,2015-04-28 15:00,2015-05-09 15:00,,PT_Normal,,,,,VtX4lMbYV02Do1QP1dGi9Q,SVTjFqlwU0ufdJ7hVkCuXA,,,N,0,0,,,2014-04-13 07:21,2014-04-14 16:04,admin,admin,
2979,143076,6971,40061,7842,0,N,N,N,CP_Phys,TT_Task,DT_FixedDrtn,TK_NotStart,CZA-TK-2310-1760,"Blasting and Painting of Shell, Bottom and Roof (Inside and Outside)",8383,1512,0,220,0,3232.747884,3232.747884,220,660,0,660,,,,2015-05-25 15:00,2015-06-20 15:00,,2014-11-30 13:00,2014-12-25 13:00,2014-11-30 13:00,2014-12-25 13:00,2014-11-30 13:00,2014-12-25 13:00,2015-05-25 15:00,2015-06-20 15:00,,PT_Normal,,,,,F/XuTQYcvE6Qon2vxT/Klg,,,,N,0,0,,,2014-04-13 07:21,2014-04-14 16:04,admin,admin,
2980,143077,6971,40062,7842,0,N,N,N,CP_Phys,TT_Task,DT_FixedDrtn,TK_NotStart,CZA-TK-2310-1770,Tank Calibration,8383,1512,0,50,0,1077.582628,1077.582628,50,0,0,0,,,,2015-06-20 15:00,2015-06-25 15:00,,2014-12-25 13:00,2014-12-31 13:00,2014-12-25 13:00,2014-12-31 13:00,2014-12-25 13:00,2014-12-31 13:00,2015-06-20 15:00,2015-06-25 15:00,,PT_Normal,,,,,48OwDSrLyUSBki2nX3lQnA,,,,N,0,0,,,2014-04-13 07:21,2014-04-14 16:04,admin,admin,
2981,143078,6971,40062,7842,0,N,N,N,CP_Phys,TT_Task,DT_FixedDrtn,TK_NotStart,CZA-TK-2310-1780,Tank Handover,8383,1512,0,20,0,1077.582628,1077.582628,20,0,0,0,,,,2015-06-25 15:00,2015-06-28 15:00,,2014-12-31 13:00,2015-01-03 13:00,2014-12-31 13:00,2015-01-03 13:00,2014-12-31 13:00,2015-01-03 13:00,2015-06-25 15:00,2015-06-28 15:00,,PT_Normal,,,,,5E4D+yr4JE6u3WDY2JlDWw,,,,N,0,0,,,2014-04-13 07:21,2014-04-14 16:04,admin,admin,
2982,143079,6971,40315,7842,0,N,N,N,CP_Phys,TT_Task,DT_FixedDrtn,TK_NotStart,CZA-TK-2401-1560,Inspection,8385,3636,0,20,0,2941.172412,2941.172412,20,0,0,0,,,,2015-05-20 13:00,2015-05-23 13:00,,2014-03-23 07:00,2014-03-24 17:00,2014-03-23 07:00,2014-03-24 17:00,2014-03-23 07:00,2014-03-24 17:00,2015-05-20 13:00,2015-05-23 13:00,,PT_Normal,,,,,yQpym35y8kC2qdICd9pu0A,IJpuctemaEe1+3FU2KG0+w,,,N,0,0,,,2014-04-13 07:21,2014-04-14 16:04,admin,admin,
2983,143080,6971,40315,7842,0,N,N,N,CP_Phys,TT_Task,DT_FixedDrtn,TK_NotStart,CZA-TK-2401-1550,Welding,8385,3636,0,10,0,14705.862057,14705.862057,10,20,0,20,,,,2015-05-21 13:00,2015-05-23 13:00,,2014-03-24 07:00,2014-03-24 17:00,2014-03-24 07:00,2014-03-24 17:00,2014-03-24 07:00,2014-03-24 17:00,2015-05-21 13:00,2015-05-23 13:00,,PT_Normal,,,,,Y0wQrSv0BkWQPddzTI76eA,Yh3EOzMmaEaXGHhPJ0Ohww,,,N,0,0,,,2014-04-13 07:21,2014-04-14 16:04,admin,admin,
2984,143081,6971,40315,7842,0,N,N,N,CP_Phys,TT_Task,DT_FixedDrtn,TK_NotStart,CZA-TK-2401-1540,Erection and Fit-up,8385,3636,0,10,0,11764.689646,11764.689646,10,20,0,20,,,,2015-05-20 13:00,2015-05-21 13:00,,2014-03-23 07:00,2014-03-23 17:00,2014-03-23 07:00,2014-03-23 17:00,2014-03-23 07:00,2014-03-23 17:00,2015-05-20 13:00,2015-05-21 13:00,,PT_Normal,,,,,Qk4jYBO7AUmoQ/xERHDhMw,Lvo8A6qLUE+XgPRtDYP17w,,,N,0,0,,,2014-04-13 07:21,2014-04-14 16:04,admin,admin,
2985,143082,6971,40316,7842,0,N,N,N,CP_Phys,TT_Task,DT_FixedDrtn,TK_NotStart,CZA-TK-2401-1510,Erection and Fit-up,8385,3636,0,10,0,14088.325733,14088.325733,10,0,0,0,,,,2015-05-18 13:00,2015-05-19 13:00,,2014-03-20 07:00,2014-03-20 17:00,2014-03-20 07:00,2014-03-20 17:00,2014-03-20 07:00,2014-03-20 17:00,2015-05-18 13:00,2015-05-19 13:00,,PT_Normal,,,,,HvsOUTLjCkux4Z7DREW2bA,yiO98pUJmku8iklqS7ZqLQ,,,N,0,0,,,2014-04-13 07:21,2014-04-14 16:04,admin,admin,
2986,143083,6971,40316,7842,0,N,N,N,CP_Phys,TT_Task,DT_FixedDrtn,TK_NotStart,CZA-TK-2401-1520,Welding,8385,3636,0,10,0,17610.407166,17610.407166,10,20,0,20,,,,2015-05-19 13:00,2015-05-20 13:00,,2014-03-22 07:00,2014-03-22 17:00,2014-03-22 07:00,2014-03-22 17:00,2014-03-22 07:00,2014-03-22 17:00,2015-05-19 13:00,2015-05-20 13:00,,PT_Normal,,,,,5+RxemmcPkyIeMTIYgAqIA,uy1v5lpKx0OuhnXfhYHPeg,,,N,0,0,,,2014-04-13 07:21,2014-04-14 16:04,admin,admin,
2987,143084,6971,40316,7842,0,N,N,N,CP_Phys,TT_Task,DT_FixedDrtn,TK_NotStart,CZA-TK-2401-1530,Inspection,8385,3636,0,20,0,3522.081433,3522.081433,20,0,0,0,,,,2015-05-18 13:00,2015-05-20 13:00,,2014-03-20 07:00,2014-03-22 17:00,2014-03-20 07:00,2014-03-22 17:00,2014-03-20 07:00,2014-03-22 17:00,2015-05-18 13:00,2015-05-20 13:00,,PT_Normal,,,,,DfU32Qvzp0Kw5wks8DmCWw,4F1g5lhSEUGm5lJHkOvT4Q,,,N,0,0,,,2014-04-13 07:21,2014-04-14 16:04,admin,admin,
2988,143085,6971,40317,7842,0,N,N,N,CP_Phys,TT_Task,DT_FixedDrtn,TK_NotStart,CZA-TK-2401-1660,Laying and Fit-up,8385,3636,0,10,0,8569.10399,8569.10399,10,20,0,20,,,,2015-05-27 13:00,2015-05-28 13:00,,2014-03-30 07:00,2014-03-30 17:00,2014-03-30 07:00,2014-03-30 17:00,2014-03-30 07:00,2014-03-30 17:00,2015-05-27 13:00,2015-05-28 13:00,,PT_Normal,,,,,aLzo7YDNskuGcRbiTBeD6Q,aQz4/1HX1kyulj8+71iaHA,,,N,0,0,,,2014-04-13 07:21,2014-04-14 16:04,admin,admin,
2989,143086,6971,40317,7842,0,N,N,N,CP_Phys,TT_Task,DT_FixedDrtn,TK_NotStart,CZA-TK-2401-1670,Welding,8385,3636,0,10,0,10711.379987,10711.379987,10,20,0,20,,,,2015-05-28 13:00,2015-05-30 13:00,,2014-03-31 07:00,2014-03-31 17:00,2014-03-31 07:00,2014-03-31 17:00,2014-03-31 07:00,2014-03-31 17:00,2015-05-28 13:00,2015-05-30 13:00,,PT_Normal,,,,,iRymFEmq80m+rf4yhiawOA,hXiq175IOEWagwVW3K/84g,,,N,0,0,,,2014-04-13 07:21,2014-04-14 16:04,admin,admin,
2990,143087,6971,40317,7842,0,N,N,N,CP_Phys,TT_Task,DT_FixedDrtn,TK_NotStart,CZA-TK-2401-1680,Inspection,8385,3636,0,20,0,2142.275997,2142.275997,20,0,0,0,,,,2015-05-27 13:00,2015-05-30 13:00,,2014-03-30 07:00,2014-03-31 17:00,2014-03-30 07:00,2014-03-31 17:00,2014-03-30 07:00,2014-03-31 17:00,2015-05-27 13:00,2015-05-30 13:00,,PT_Normal,,,,,TMbWn5Z+MkWfQgh6cQbvbQ,oPpXqDabIkmzHU4mbnWhSA,,,N,0,0,,,2014-04-13 07:21,2014-04-14 16:04,admin,admin,
2991,143088,6971,40318,7842,0,N,N,N,CP_Phys,TT_Task,DT_FixedDrtn,TK_NotStart,CZA-TK-2401-1690,Installation and Fit-up,8385,3636,0,20,0,1638.449134,1638.449134,20,40,0,40,,,,2015-05-30 13:00,2015-06-01 13:00,,2014-04-01 07:00,2014-04-02 17:00,2014-04-01 07:00,2014-04-02 17:00,2014-04-01 07:00,2014-04-02 17:00,2015-05-30 13:00,2015-06-01 13:00,,PT_Normal,,,,,uhjbD1n+RE+XNdYBqRcRrQ,iljLt120h0+kwdpCaki9Yw,,,N,0,0,,,2014-04-13 07:21,2014-04-14 16:04,admin,admin,
2992,143089,6971,40318,7842,0,N,N,N,CP_Phys,TT_Task,DT_FixedDrtn,TK_NotStart,CZA-TK-2401-1700,Welding,8385,3636,0,30,0,2048.061418,2048.061418,30,60,0,60,,,,2015-06-01 13:00,2015-06-04 13:00,,2014-04-03 07:00,2014-04-06 17:00,2014-04-03 07:00,2014-04-06 17:00,2014-04-03 07:00,2014-04-06 17:00,2015-06-01 13:00,2015-06-04 13:00,,PT_Normal,,,,,L9GmjVoXbEyK9HFFDSjMEg,BKpvNmdl+kCDcExiHoMm+Q,,,N,0,0,,,2014-04-13 07:21,2014-04-14 16:04,admin,admin,
2993,143090,6971,40318,7842,0,N,N,N,CP_Phys,TT_Task,DT_FixedDrtn,TK_NotStart,CZA-TK-2401-1710,Inspection,8385,3636,0,50,0,409.612284,409.612284,50,0,0,0,,,,2015-05-30 13:00,2015-06-04 13:00,,2014-04-01 07:00,2014-04-06 17:00,2014-04-01 07:00,2014-04-06 17:00,2014-04-01 07:00,2014-04-06 17:00,2015-05-30 13:00,2015-06-04 13:00,,PT_Normal,,,,,XxlJ35WAfE2f4sQ1T2pEAA,naEuf1Gt/kunfIAE5CFygQ,,,N,0,0,,,2014-04-13 07:21,2014-04-14 16:04,admin,admin,
2994,143091,6971,40319,7842,0,N,N,N,CP_Phys,TT_Task,DT_FixedDrtn,TK_NotStart,CZA-TK-2401-1390,Erection and Fit-up,8385,3636,0,10,0,8705.504065,8705.504065,10,0,0,0,,,,2015-05-07 13:00,2015-05-09 13:00,,2014-03-10 07:00,2014-03-10 17:00,2014-03-10 07:00,2014-03-10 17:00,2014-03-10 07:00,2014-03-10 17:00,2015-05-07 13:00,2015-05-09 13:00,,PT_Normal,,,,,cgkQpJ9NLUG3ujpiLcguow,h+ZHwNkVYkeYoL3yam1DkQ,,,N,0,0,,,2014-04-13 07:21,2014-04-14 16:04,admin,admin,
2995,143092,6971,40319,7842,0,N,N,N,CP_Phys,TT_Task,DT_FixedDrtn,TK_NotStart,CZA-TK-2401-1400,Welding,8385,3636,0,10,0,10881.880081,10881.880081,10,20,0,20,,,,2015-05-09 13:00,2015-05-10 13:00,,2014-03-11 07:00,2014-03-11 17:00,2014-03-11 07:00,2014-03-11 17:00,2014-03-11 07:00,2014-03-11 17:00,2015-05-09 13:00,2015-05-10 13:00,,PT_Normal,,,,,cinWaUUosUG2RBxrrnugKg,KXpXL7kXBkajmDAni/i1lg,,,N,0,0,,,2014-04-13 07:21,2014-04-14 16:04,admin,admin,
2996,143093,6971,40319,7842,0,N,N,N,CP_Phys,TT_Task,DT_FixedDrtn,TK_NotStart,CZA-TK-2401-1410,Inspection,8385,3636,0,20,0,2176.376016,2176.376016,20,0,0,0,,,,2015-05-07 13:00,2015-05-10 13:00,,2014-03-10 07:00,2014-03-11 17:00,2014-03-10 07:00,2014-03-11 17:00,2014-03-10 07:00,2014-03-11 17:00,2015-05-07 13:00,2015-05-10 13:00,,PT_Normal,,,,,1myugsQsP0qSJxV2zgidwQ,QS1HoIrn4kmqq6eN8X6J7w,,,N,0,0,,,2014-04-13 07:21,2014-04-14 16:04,admin,admin,
2997,143094,6971,40320,7842,0,N,N,N,CP_Phys,TT_Task,DT_FixedDrtn,TK_NotStart,CZA-TK-2401-1420,Erection and Fit-up,8385,3636,0,10,0,8787.988751,8787.988751,10,20,0,20,,,,2015-05-10 13:00,2015-05-11 13:00,,2014-03-12 07:00,2014-03-12 17:00,2014-03-12 07:00,2014-03-12 17:00,2014-03-12 07:00,2014-03-12 17:00,2015-05-10 13:00,2015-05-11 13:00,,PT_Normal,,,,,Ecteu1CGLUKe6lBeu4Algg,+NDn/w0uskWsWCft5rB92w,,,N,0,0,,,2014-04-13 07:21,2014-04-14 16:04,admin,admin,
2998,143095,6971,40320,7842,0,N,N,N,CP_Phys,TT_Task,DT_FixedDrtn,TK_NotStart,CZA-TK-2401-1430,Welding,8385,3636,0,10,0,10984.985939,10984.985939,10,20,0,20,,,,2015-05-11 13:00,2015-05-12 13:00,,2014-03-13 07:00,2014-03-13 17:00,2014-03-13 07:00,2014-03-13 17:00,2014-03-13 07:00,2014-03-13 17:00,2015-05-11 13:00,2015-05-12 13:00,,PT_Normal,,,,,PPBxQQ2w4EKOGABkmJal0g,OnjyFSbuxEeMUMQsPygVxQ,,,N,0,0,,,2014-04-13 07:21,2014-04-14 16:04,admin,admin,
2999,143096,6971,40320,7842,0,N,N,N,CP_Phys,TT_Task,DT_FixedDrtn,TK_NotStart,CZA-TK-2401-1440,Inspection,8385,3636,0,20,0,2196.997188,2196.997188,20,0,0,0,,,,2015-05-10 13:00,2015-05-12 13:00,,2014-03-12 07:00,2014-03-13 17:00,2014-03-12 07:00,2014-03-13 17:00,2014-03-12 07:00,2014-03-13 17:00,2015-05-10 13:00,2015-05-12 13:00,,PT_Normal,,,,,pJNWTeXyBUKo1ZRNInVo3w,e4Kro3jDCUyLxpt205dTTA,,,N,0,0,,,2014-04-13 07:21,2014-04-14 16:04,admin,admin,
3000,143097,6971,40321,7842,0,N,N,N,CP_Phys,TT_Task,DT_FixedDrtn,TK_NotStart,CZA-TK-2401-1450,Erection and Fit-up,8385,3636,0,10,0,14088.325733,14088.325733,10,0,0,0,,,,2015-05-12 13:00,2015-05-13 13:00,,2014-03-15 07:00,2014-03-15 17:00,2014-03-15 07:00,2014-03-15 17:00,2014-03-15 07:00,2014-03-15 17:00,2015-05-12 13:00,2015-05-13 13:00,,PT_Normal,,,,,aAQnGjNUZ0C9kXI4BrTXnA,LYNbz4y/gUecoZtpYJSXcw,,,N,0,0,,,2014-04-13 07:21,2014-04-14 16:04,admin,admin,
3001,143098,6971,40321,7842,0,N,N,N,CP_Phys,TT_Task,DT_FixedDrtn,TK_NotStart,CZA-TK-2401-1460,Welding,8385,3636,0,10,0,17610.407166,17610.407166,10,0,0,0,,,,2015-05-13 13:00,2015-05-14 13:00,,2014-03-16 07:00,2014-03-16 17:00,2014-03-16 07:00,2014-03-16 17:00,2014-03-16 07:00,2014-03-16 17:00,2015-05-13 13:00,2015-05-14 13:00,,PT_Normal,,,,,eAlpiFdhVUSNH53zIHYYKQ,a3uz3JSGfUqatbFntaeOpA,,,N,0,0,,,2014-04-13 07:21,2014-04-14 16:04,admin,admin,
3002,143099,6971,40321,7842,0,N,N,N,CP_Phys,TT_Task,DT_FixedDrtn,TK_NotStart,CZA-TK-2401-1470,Inspection,8385,3636,0,20,0,3522.081433,3522.081433,20,0,0,0,,,,2015-05-12 13:00,2015-05-14 13:00,,2014-03-15 07:00,2014-03-16 17:00,2014-03-15 07:00,2014-03-16 17:00,2014-03-15 07:00,2014-03-16 17:00,2015-05-12 13:00,2015-05-14 13:00,,PT_Normal,,,,,whGNr3TPtE6qTircWjMCmg,SRvSgnThVEqUTvRk5M0Q5Q,,,N,0,0,,,2014-04-13 07:21,2014-04-14 16:04,admin,admin,
3003,143100,6971,40531,7842,0,N,N,N,CP_Phys,TT_Task,DT_FixedDrtn,TK_NotStart,CZA-TK-2401-1500,Inspection,8385,3636,0,30,0,333.564846,333.564846,30,0,0,0,,,,2015-05-14 13:00,2015-05-18 13:00,,2014-03-17 07:00,2014-03-19 17:00,2014-03-17 07:00,2014-03-19 17:00,2014-03-17 07:00,2014-03-19 17:00,2015-05-14 13:00,2015-05-18 13:00,,PT_Normal,,,,,HE5ulHUp9UuFJcakf/4s+g,i3g2LmnKGUeggfoI3WL/wA,,,N,0,0,,,2014-04-13 07:21,2014-04-14 16:04,admin,admin,
3004,143101,6971,40531,7842,0,N,N,N,CP_Phys,TT_Task,DT_FixedDrtn,TK_NotStart,CZA-TK-2401-1490,Welding,8385,3636,0,20,0,1667.824231,1667.824231,20,40,0,40,,,,2015-05-16 13:00,2015-05-18 13:00,,2014-03-18 07:00,2014-03-19 17:00,2014-03-18 07:00,2014-03-19 17:00,2014-03-18 07:00,2014-03-19 17:00,2015-05-16 13:00,2015-05-18 13:00,,PT_Normal,,,,,CmoWLf7nREeX9XtSk6LWQw,kMTB7NU01EebI8k9zqiAWQ,,,N,0,0,,,2014-04-13 07:21,2014-04-14 16:04,admin,admin,
3005,143102,6971,40531,7842,0,N,N,N,CP_Phys,TT_Task,DT_FixedDrtn,TK_NotStart,CZA-TK-2401-1480,"Cutting, Installation and Fit-up",8385,3636,0,10,0,1334.259385,1334.259385,10,20,0,20,,,,2015-05-14 13:00,2015-05-16 13:00,,2014-03-17 07:00,2014-03-17 17:00,2014-03-17 07:00,2014-03-17 17:00,2014-03-17 07:00,2014-03-17 17:00,2015-05-14 13:00,2015-05-16 13:00,,PT_Normal,,,,,PgjX6sQEr0u9aRbx8sXRSw,fpRHlqbLsEuq8I/RhE1Wlg,,,N,0,0,,,2014-04-13 07:21,2014-04-14 16:04,admin,admin,
3006,143103,6971,40532,7842,0,N,N,N,CP_Phys,TT_Task,DT_FixedDrtn,TK_NotStart,CZA-TK-2401-1570,"Cutting, Installation and Fit-up",8385,3636,0,10,0,0,0,10,20,0,20,,,,2015-05-23 13:00,2015-05-24 13:00,,2014-03-25 07:00,2014-03-25 17:00,2014-03-25 07:00,2014-03-25 17:00,2014-03-25 07:00,2014-03-25 17:00,2015-05-23 13:00,2015-05-24 13:00,,PT_Normal,,,,,/NJ4Hu5uWU+F0rProZ1FhQ,MvB4lLPdw0+MkXN8WAzP3A,,,N,0,0,,,2014-04-13 07:21,2014-04-14 16:04,admin,admin,
3007,143104,6971,40532,7842,0,N,N,N,CP_Phys,TT_Task,DT_FixedDrtn,TK_NotStart,CZA-TK-2401-1580,Welding,8385,3636,0,10,0,0,0,10,20,0,20,,,,2015-05-24 13:00,2015-05-25 13:00,,2014-03-26 07:00,2014-03-26 17:00,2014-03-26 07:00,2014-03-26 17:00,2014-03-26 07:00,2014-03-26 17:00,2015-05-24 13:00,2015-05-25 13:00,,PT_Normal,,,,,821ZN9TnNEGGG3+ztv8dkg,Gmc1yKimOEibcoO9IXEvFw,,,N,0,0,,,2014-04-13 07:21,2014-04-14 16:04,admin,admin,
3008,143105,6971,40532,7842,0,N,N,N,CP_Phys,TT_Task,DT_FixedDrtn,TK_NotStart,CZA-TK-2401-1590,Inspection,8385,3636,0,20,0,0,0,20,0,0,0,,,,2015-05-23 13:00,2015-05-25 13:00,,2014-03-25 07:00,2014-03-26 17:00,2014-03-25 07:00,2014-03-26 17:00,2014-03-25 07:00,2014-03-26 17:00,2015-05-23 13:00,2015-05-25 13:00,,PT_Normal,,,,,sjB7xGP7H0eq5O+raDilnw,hnwV32VUD0SzBvX5Y6NlMw,,,N,0,0,,,2014-04-13 07:21,2014-04-14 16:04,admin,admin,
3009,143106,6971,40533,7842,0,N,N,N,CP_Phys,TT_Task,DT_FixedDrtn,TK_NotStart,CZA-TK-2401-1600,Erection and Fit-up,8385,3636,0,10,0,296.681152,296.681152,10,0,0,0,,,,2015-05-25 13:00,2015-05-26 13:00,,2014-03-27 07:00,2014-03-27 17:00,2014-03-27 07:00,2014-03-27 17:00,2014-03-27 07:00,2014-03-27 17:00,2015-05-25 13:00,2015-05-26 13:00,,PT_Normal,,,,,RMwtg1Sy8kG6v35487SqbA,PhqmlxsPnkWFekupCADGYw,,,N,0,0,,,2014-04-13 07:21,2014-04-14 16:04,admin,admin,
3010,143107,6971,40533,7842,0,N,N,N,CP_Phys,TT_Task,DT_FixedDrtn,TK_NotStart,CZA-TK-2401-1610,Welding,8385,3636,0,10,0,370.85144,370.85144,10,20,0,20,,,,2015-05-26 13:00,2015-05-27 13:00,,2014-03-29 07:00,2014-03-29 17:00,2014-03-29 07:00,2014-03-29 17:00,2014-03-29 07:00,2014-03-29 17:00,2015-05-26 13:00,2015-05-27 13:00,,PT_Normal,,,,,67pb2AV5lEmQqtWQBBpxcw,LOVOvTQBq0u1PZfS64qDKA,,,N,0,0,,,2014-04-13 07:21,2014-04-14 16:04,admin,admin,
3011,143108,6971,40533,7842,0,N,N,N,CP_Phys,TT_Task,DT_FixedDrtn,TK_NotStart,CZA-TK-2401-1620,Inspection,8385,3636,0,20,0,74.170288,74.170288,20,0,0,0,,,,2015-05-25 13:00,2015-05-27 13:00,,2014-03-27 07:00,2014-03-29 17:00,2014-03-27 07:00,2014-03-29 17:00,2014-03-27 07:00,2014-03-29 17:00,2015-05-25 13:00,2015-05-27 13:00,,PT_Normal,,,,,EazsjTp0wEC978OiqQZadw,J6nhiAAuzEGEVkmMulF1Hw,,,N,0,0,,,2014-04-13 07:21,2014-04-14 16:04,admin,admin,
3012,143109,6971,40534,7842,0,N,N,N,CP_Phys,TT_Task,DT_FixedDrtn,TK_NotStart,CZA-TK-2401-1750,Erection and Fit-up,8385,3636,0,20,0,0,0,20,0,0,0,,,,2015-06-02 15:00,2015-06-04 15:00,,2014-04-05 09:00,2014-04-07 09:00,2014-04-05 09:00,2014-04-07 09:00,2014-04-05 09:00,2014-04-07 09:00,2015-06-02 15:00,2015-06-04 15:00,,PT_Normal,,,,,b/kVp1F7t0mT5i1Ligcnng,dyI4vzz2u0yK1M696BKjCA,,,N,0,0,,,2014-04-13 07:21,2014-04-14 16:04,admin,admin,
3013,143110,6971,40534,7842,0,N,N,N,CP_Phys,TT_Task,DT_FixedDrtn,TK_NotStart,CZA-TK-2401-1760,Welding,8385,3636,0,40,0,0,0,40,80,0,80,,,,2015-06-04 15:00,2015-06-09 15:00,,2014-04-07 09:00,2014-04-12 09:00,2014-04-07 09:00,2014-04-12 09:00,2014-04-07 09:00,2014-04-12 09:00,2015-06-04 15:00,2015-06-09 15:00,,PT_Normal,,,,,2jLSlKfPlkWqAcvHPeN5SA,9RI0D4RPY0OH6d8B5a78fw,,,N,0,0,,,2014-04-13 07:21,2014-04-14 16:04,admin,admin,
3014,143111,6971,40534,7842,0,N,N,N,CP_Phys,TT_Task,DT_FixedDrtn,TK_NotStart,CZA-TK-2401-1770,Inspection,8385,3636,40,60,0,0,0,60,0,0,0,,,,2015-06-02 15:00,2015-06-09 15:00,,2014-04-05 09:00,2014-04-12 09:00,2014-04-05 09:00,2014-04-12 09:00,2014-04-05 09:00,2014-04-12 09:00,2015-06-02 15:00,2015-06-09 15:00,,PT_Normal,,,,,T8dNuQ0/d0qq3JaK/EXRbA,Im5XMT7nlEuOs/bd9AT0jg,,,N,0,0,,,2014-04-13 07:21,2014-04-14 16:04,admin,admin,
3015,143112,6971,40535,7842,0,N,N,N,CP_Phys,TT_Task,DT_FixedDrtn,TK_NotStart,CZA-TK-2401-1720,Erection and Fit-up,8385,3636,0,20,0,0,0,20,0,0,0,,,,2015-06-01 09:00,2015-06-03 09:00,,2014-04-02 13:00,2014-04-05 13:00,2014-04-02 13:00,2014-04-05 13:00,2014-04-02 13:00,2014-04-05 13:00,2015-06-01 09:00,2015-06-03 09:00,,PT_Normal,,,,,M4Soz17vW0aIIz0sONjWHw,VTloJ0GHkkqxRji+nBqlkg,,,N,0,0,,,2014-04-13 07:21,2014-04-14 16:04,admin,admin,
3016,143113,6971,40535,7842,0,N,N,N,CP_Phys,TT_Task,DT_FixedDrtn,TK_NotStart,CZA-TK-2401-1730,Welding,8385,3636,0,40,0,0,0,40,80,0,80,,,,2015-06-03 09:00,2015-06-08 09:00,,2014-04-05 13:00,2014-04-09 13:00,2014-04-05 13:00,2014-04-09 13:00,2014-04-05 13:00,2014-04-09 13:00,2015-06-03 09:00,2015-06-08 09:00,,PT_Normal,,,,,fyDCB2uf206lQcW5jeXbog,Ktbx3jvjFEWGDbXSVSGRsQ,,,N,0,0,,,2014-04-13 07:21,2014-04-14 16:04,admin,admin,
3017,143114,6971,40535,7842,0,N,N,N,CP_Phys,TT_Task,DT_FixedDrtn,TK_NotStart,CZA-TK-2401-1740,Inspection,8385,3636,0,60,0,0,0,60,0,0,0,,,,2015-06-01 09:00,2015-06-08 09:00,,2014-04-02 13:00,2014-04-09 13:00,2014-04-02 13:00,2014-04-09 13:00,2014-04-02 13:00,2014-04-09 13:00,2015-06-01 09:00,2015-06-08 09:00,,PT_Normal,,,,,qKvSb5XdakuFfR+XmjeWbQ,UM3GIGZYG0eXqPWNL97oZg,,,N,0,0,,,2014-04-13 07:21,2014-04-14 16:04,admin,admin,
3018,143115,6971,40009,7842,0,N,N,N,CP_Phys,TT_Task,DT_FixedDrtn,TK_NotStart,CZA-TK-2401-1780,"Filling, Holding and Draining of Water",8385,3596,0,40,0,274.156458,274.156458,40,0,0,0,,,,2015-06-09 15:00,2015-06-14 15:00,,2014-04-16 09:00,2014-04-21 09:00,2014-04-16 09:00,2014-04-21 09:00,2014-04-16 09:00,2014-04-21 09:00,2015-06-09 15:00,2015-06-14 15:00,,PT_Normal,,,,,pM2lF1rFJ0+aDawdAqNJTQ,S6GajAXbU0q1DmENJ5J0Tg,,,N,0,0,,,2014-04-13 07:21,2014-04-14 16:04,admin,admin,
3019,143116,6971,39933,7842,0,N,N,N,CP_Phys,TT_Task,DT_FixedDrtn,TK_NotStart,CZA-TK-2401-1790,"Blasting and Painting of Bottom, Shell and Roof (Inside and Outside)",8385,3596,0,50,0,164.493875,164.493875,50,0,0,0,,,,2015-06-14 15:00,2015-06-20 15:00,,2014-04-21 09:00,2014-04-27 09:00,2014-04-21 09:00,2014-04-27 09:00,2014-04-21 09:00,2014-04-27 09:00,2015-06-14 15:00,2015-06-20 15:00,,PT_Normal,,,,,i4W+qU5x5k+TnGAzi8G2wA,PutaL9rPBE264Xf/vOui/Q,,,N,0,0,,,2014-04-13 07:21,2014-04-14 16:04,admin,admin,
3020,143117,6971,39943,7842,0,N,N,N,CP_Phys,TT_Mile,DT_FixedDrtn,TK_NotStart,CZA-TK-2401-1380,Foundation Takeover From Client,,0,0,0,0,0,0,0,0,0,0,2014-03-10 00:00,,,2014-03-09 17:00,2014-03-09 17:00,,2014-03-10 07:00,2014-03-10 07:00,2014-03-10 07:00,2014-03-10 07:00,2014-03-10 07:00,2014-03-10 07:00,2014-03-09 17:00,2014-03-09 17:00,CS_MSO,PT_Normal,,,,,uuiRlakRsk6zGB7rWGrKHw,Bm6WRLk89U6GEHOznU8sag,,,N,0,0,,,2014-04-13 07:21,2014-04-13 07:42,admin,admin,
3021,143118,6971,39944,7842,0,N,N,N,CP_Phys,TT_Task,DT_FixedDrtn,TK_NotStart,CZA-TK-2401-1800,Tank Calibration,8385,3596,0,50,0,54.831292,54.831292,50,0,0,0,,,,2015-06-20 15:00,2015-06-25 15:00,,2014-04-27 09:00,2014-05-03 09:00,2014-04-27 09:00,2014-05-03 09:00,2014-04-27 09:00,2014-05-03 09:00,2015-06-20 15:00,2015-06-25 15:00,,PT_Normal,,,,,Ow6Nbv8jeEaQGMBHJEJU1w,JW+kiHiwJEWHQX5PsH7gvQ,,,N,0,0,,,2014-04-13 07:21,2014-04-14 16:04,admin,admin,
3022,143119,6971,39944,7842,0,N,N,N,CP_Phys,TT_Task,DT_FixedDrtn,TK_NotStart,CZA-TK-2401-1810,Tank Handover,8385,3596,2084,20,0,54.831292,54.831292,20,0,0,0,,,,2015-06-25 15:00,2015-06-28 15:00,,2014-05-03 09:00,2014-05-05 09:00,2014-05-03 09:00,2014-05-05 09:00,2014-05-03 09:00,2014-05-05 09:00,2015-06-25 15:00,2015-06-28 15:00,,PT_Normal,,,,,2AoXtb2VW0eEUFbAR1avaA,JJJTHqqsJ0KA5VKHGLSY1g,,,N,0,0,,,2014-04-13 07:21,2014-04-14 16:04,admin,admin,
3023,143120,6971,40013,7842,0,N,N,N,CP_Phys,TT_Task,DT_FixedDrtn,TK_NotStart,CZA-TK-2401-1280,"Cutting, Bevelling and Rolling Shell No.1",8490,4364,0,10,0,71.979,71.979,10,0,0,0,,,,2015-05-07 11:00,2015-05-09 11:00,,2013-12-15 07:00,2013-12-15 17:00,2013-12-15 07:00,2013-12-15 17:00,2013-12-15 07:00,2013-12-15 17:00,2015-05-07 11:00,2015-05-09 11:00,,PT_Normal,,,,,KXbSmDvHqE28pAH7RxdFwA,M8o+YDuD2UykpDYNsV92GA,,,N,0,0,,,2014-04-13 07:21,2014-04-14 17:03,admin,admin,
3024,143121,6971,40013,7842,0,N,N,N,CP_Phys,TT_Task,DT_FixedDrtn,TK_NotStart,CZA-TK-2401-1290,"Cutting, Bevelling & Rolling Shell No.2",8490,4364,0,10,0,115.392,115.392,10,0,0,0,,,,2015-05-07 11:00,2015-05-09 11:00,,2013-12-15 07:00,2013-12-15 17:00,2013-12-15 07:00,2013-12-15 17:00,2013-12-15 07:00,2013-12-15 17:00,2015-05-07 11:00,2015-05-09 11:00,,PT_Normal,,,,,FvIn4yfQEUykFdr+kSkO1A,tH3r+gd7SUCGryLQNkmaQg,,,N,0,0,,,2014-04-13 07:21,2014-04-14 17:03,admin,admin,
3025,143122,6971,40013,7842,0,N,N,N,CP_Phys,TT_Task,DT_FixedDrtn,TK_NotStart,CZA-TK-2401-1300,"Cutting, Fit-up and Welding of Shell Nozzles. Manholes and Othe Appurtanances",8490,4364,0,40,0,10.9284,10.9284,40,0,0,0,,,,2015-05-09 11:00,2015-05-13 11:00,,2013-12-16 07:00,2013-12-19 17:00,2013-12-16 07:00,2013-12-19 17:00,2013-12-16 07:00,2013-12-19 17:00,2015-05-09 11:00,2015-05-13 11:00,,PT_Normal,,,,,KPaxDs+VWUSIYubO/CB9bw,ZYm+T55bJkK4YuB6T7eb8A,,,N,0,0,,,2014-04-13 07:21,2014-04-14 17:03,admin,admin,
3026,143123,6971,40013,7842,0,N,N,N,CP_Phys,TT_Task,DT_FixedDrtn,TK_NotStart,CZA-TK-2401-1310,"Cutting, Bevelling & Rolling Shell No.3",8490,4364,0,10,0,115.392,115.392,10,0,0,0,,,,2015-05-13 11:00,2015-05-14 11:00,,2013-12-21 07:00,2013-12-21 17:00,2013-12-21 07:00,2013-12-21 17:00,2013-12-21 07:00,2013-12-21 17:00,2015-05-13 11:00,2015-05-14 11:00,,PT_Normal,,,,,cWcxj5WyFUCDib5tQdQ17w,3LHbfv7QiEmXD0ziGpG0fA,,,N,0,0,,,2014-04-13 07:21,2014-04-14 17:03,admin,admin,
3027,143124,6971,40013,7842,0,N,N,N,CP_Phys,TT_Task,DT_FixedDrtn,TK_NotStart,CZA-TK-2401-1320,"Cutting, Bevelling & Rolling Shell No.4",8490,4364,0,10,0,96.36,96.36,10,0,0,0,,,,2015-05-13 11:00,2015-05-14 11:00,,2013-12-21 07:00,2013-12-21 17:00,2013-12-21 07:00,2013-12-21 17:00,2013-12-21 07:00,2013-12-21 17:00,2015-05-13 11:00,2015-05-14 11:00,,PT_Normal,,,,,nrZD8gh9Nk2nITCIC1NCFw,dkcYwPMM0Uu6ETAGeJ9BNw,,,N,0,0,,,2014-04-13 07:21,2014-04-14 17:03,admin,admin,
3028,143125,6971,40013,7842,0,N,N,N,CP_Phys,TT_Task,DT_FixedDrtn,TK_NotStart,CZA-TK-2401-1330,"Cutting, Bevelling and Rolling of Curb Angle",8490,4364,0,30,0,2.43,2.43,30,0,0,0,,,,2015-05-17 07:00,2015-05-19 17:00,,2013-12-23 13:00,2013-12-26 13:00,2013-12-23 13:00,2013-12-26 13:00,2013-12-23 13:00,2013-12-26 13:00,2015-05-17 07:00,2015-05-19 17:00,,PT_Normal,,,,,R7uKwcr7vEiTWQL/fbnHhw,1adLZu04zk6jNS6G+4ZVIA,,,N,0,0,,,2014-04-13 07:21,2014-04-14 17:03,admin,admin,
3029,143126,6971,40013,7842,0,N,N,N,CP_Phys,TT_Task,DT_FixedDrtn,TK_NotStart,CZA-TK-2401-1340,"Cutting, Fit-up and Welding of Roof Structure",8490,4364,0,50,0,0,0,50,0,0,0,,,,2015-05-17 07:00,2015-05-21 17:00,,2013-12-23 13:00,2013-12-29 13:00,2013-12-23 13:00,2013-12-29 13:00,2013-12-23 13:00,2013-12-29 13:00,2015-05-17 07:00,2015-05-21 17:00,,PT_Normal,,,,,nCNeY2EvD0+cldx2w6E4Tg,trCjhKvdkUq4lmOHaa8x4w,,,N,0,0,,,2014-04-13 07:21,2014-04-14 17:03,admin,admin,
3030,143127,6971,40013,7842,0,N,N,N,CP_Phys,TT_Task,DT_FixedDrtn,TK_NotStart,CZA-TK-2401-1350,Cutting of Roof Plates,8490,4364,0,10,0,70.1862,70.1862,10,0,0,0,,,,2015-05-23 07:00,2015-05-23 17:00,,2013-12-29 13:00,2013-12-30 13:00,2013-12-29 13:00,2013-12-30 13:00,2013-12-29 13:00,2013-12-30 13:00,2015-05-23 07:00,2015-05-23 17:00,,PT_Normal,,,,,9Thf2a2yqE+WzP0mBpf4uw,j6/bZ3LGw0uDVOSWtHqOuw,,,N,0,0,,,2014-04-13 07:21,2014-04-14 17:03,admin,admin,
3031,143128,6971,40013,7842,0,N,N,N,CP_Phys,TT_Task,DT_FixedDrtn,TK_NotStart,CZA-TK-2401-1360,"Cutting, Fit-up and Welding of Roof Structure, Gratings and Handrails",8490,4364,0,70,0,0,0,70,0,0,0,,,,2015-05-24 07:00,2015-05-31 17:00,,2013-12-30 13:00,2014-01-07 13:00,2013-12-30 13:00,2014-01-07 13:00,2013-12-30 13:00,2014-01-07 13:00,2015-05-24 07:00,2015-05-31 17:00,,PT_Normal,,,,,9jFMC/oNtkaBDgCLKkMizQ,rGiA4wuXOkWKU1kn46apjA,,,N,0,0,,,2014-04-13 07:21,2014-04-14 17:03,admin,admin,
3032,143129,6971,40013,7842,0,N,N,N,CP_Phys,TT_Task,DT_FixedDrtn,TK_NotStart,CZA-TK-2401-1370,"Cutting,Fit-up and Welding of Roof Nozzles, Manholes and Other Appurtanances",8490,4364,728,40,0,17.8932,17.8932,40,0,0,0,,,,2015-05-25 13:00,2015-05-30 13:00,,2014-01-01 09:00,2014-01-06 09:00,2014-01-01 09:00,2014-01-06 09:00,2014-01-01 09:00,2014-01-06 09:00,2015-05-25 13:00,2015-05-30 13:00,,PT_Normal,,,,,wWnGfjOIwEqaAB0/xZZdTg,uQagtCY+E0uBi2twdOPLtQ,,,N,0,0,,,2014-04-13 07:21,2014-04-14 17:03,admin,admin,
3033,143130,6971,40013,7842,0,N,N,N,CP_Phys,TT_Task,DT_FixedDrtn,TK_NotStart,CZA-TK-2401-1270,Cutting of Bottom Plates,8490,2906,0,10,0,71.3034,71.3034,10,0,0,0,,,,2014-11-18 13:00,2014-11-19 13:00,,2013-12-15 07:00,2013-12-15 17:00,2013-12-15 07:00,2013-12-15 17:00,2013-12-15 07:00,2013-12-15 17:00,2014-11-18 13:00,2014-11-19 13:00,,PT_Normal,,,,,Gn3SORz8e0Wum2XPcy917g,5qDYcg79Q06SVS2U0YVCkA,,,N,0,0,,,2014-04-13 07:21,2014-04-14 17:03,admin,admin,
3034,143131,6971,40544,7842,0,N,N,N,CP_Phys,TT_Task,DT_FixedDrtn,TK_NotStart,CZA-TK-0516-1930,Inspection,8402,596,0,40,0,6.694343,6.694343,40,0,0,0,,,,2015-02-08 13:00,2015-02-12 13:00,,2014-12-01 07:00,2014-12-04 17:00,2014-12-01 07:00,2014-12-04 17:00,2014-12-01 07:00,2014-12-04 17:00,2015-02-08 13:00,2015-02-12 13:00,,PT_Normal,,,,,9RuVbHXUME+g8HTKbbXApw,RvkK1mmHD0KCoAx5cV48pg,,,N,0,0,,,2014-04-13 07:21,2014-04-14 16:04,admin,admin,
3035,143132,6971,40544,7842,0,N,N,N,CP_Phys,TT_Task,DT_FixedDrtn,TK_NotStart,CZA-TK-0516-1910,Laying and Fit-up,8402,596,0,10,0,26.77737,26.77737,10,20,0,20,,,,2015-02-08 13:00,2015-02-09 13:00,,2014-12-01 07:00,2014-12-01 17:00,2014-12-01 07:00,2014-12-01 17:00,2014-12-01 07:00,2014-12-01 17:00,2015-02-08 13:00,2015-02-09 13:00,,PT_Normal,,,,,HcLvaaWFaU2kJQX1NL3CHg,PIgrLqdJgUiWzXfC3n7jTQ,,,N,0,0,,,2014-04-13 07:21,2014-04-14 16:04,admin,admin,
3036,143133,6971,40544,7842,0,N,N,N,CP_Phys,TT_Task,DT_FixedDrtn,TK_NotStart,CZA-TK-0516-1920,Welding,8402,596,0,30,0,33.471713,33.471713,30,60,0,60,,,,2015-02-09 13:00,2015-02-12 13:00,,2014-12-02 07:00,2014-12-04 17:00,2014-12-02 07:00,2014-12-04 17:00,2014-12-02 07:00,2014-12-04 17:00,2015-02-09 13:00,2015-02-12 13:00,,PT_Normal,,,,,0eLsK67V9EasTeLsc8FLYg,TrPoup61nECpnMOyepRp4A,,,N,0,0,,,2014-04-13 07:21,2014-04-14 16:04,admin,admin,
3037,143134,6971,40336,7842,0,N,N,N,CP_Phys,TT_Task,DT_FixedDrtn,TK_NotStart,CZA-TK-0516-1940,Erection and Fit-up,8402,596,0,10,0,66.831793,66.831793,10,20,0,20,,,,2015-02-12 13:00,2015-02-14 13:00,,2014-12-06 07:00,2014-12-06 17:00,2014-12-06 07:00,2014-12-06 17:00,2014-12-06 07:00,2014-12-06 17:00,2015-02-12 13:00,2015-02-14 13:00,,PT_Normal,,,,,+QUoRZqJTU2syqZBo9tLrQ,xyl6SgNOGEeHnWRXh65tuw,,,N,0,0,,,2014-04-13 07:21,2014-04-14 16:04,admin,admin,
3038,143135,6971,40336,7842,0,N,N,N,CP_Phys,TT_Task,DT_FixedDrtn,TK_NotStart,CZA-TK-0516-1950,Welding,8402,596,0,30,0,83.539741,83.539741,30,60,0,60,,,,2015-02-14 13:00,2015-02-17 13:00,,2014-12-07 07:00,2014-12-09 17:00,2014-12-07 07:00,2014-12-09 17:00,2014-12-07 07:00,2014-12-09 17:00,2015-02-14 13:00,2015-02-17 13:00,,PT_Normal,,,,,BX8KTVXEAku7nIn/kkitwQ,OnRQrfWit0Wv4hs5spSdbQ,,,N,0,0,,,2014-04-13 07:21,2014-04-14 16:04,admin,admin,
3039,143136,6971,40336,7842,0,N,N,N,CP_Phys,TT_Task,DT_FixedDrtn,TK_NotStart,CZA-TK-0516-1960,Inspection,8402,596,0,40,0,16.707948,16.707948,40,0,0,0,,,,2015-02-12 13:00,2015-02-17 13:00,,2014-12-06 07:00,2014-12-09 17:00,2014-12-06 07:00,2014-12-09 17:00,2014-12-06 07:00,2014-12-09 17:00,2015-02-12 13:00,2015-02-17 13:00,,PT_Normal,,,,,CTdKca3baU6qC0lQQQn/Jw,bDIHhlKLFEyj0KgnrJcIuQ,,,N,0,0,,,2014-04-13 07:21,2014-04-14 16:04,admin,admin,
3040,143137,6971,40337,7842,0,N,N,N,CP_Phys,TT_Task,DT_FixedDrtn,TK_NotStart,CZA-TK-0516-1990,Inspection,8402,596,0,40,0,12.416989,12.416989,40,0,0,0,,,,2015-02-17 13:00,2015-02-22 13:00,,2014-12-10 07:00,2014-12-14 17:00,2014-12-10 07:00,2014-12-14 17:00,2014-12-10 07:00,2014-12-14 17:00,2015-02-17 13:00,2015-02-22 13:00,,PT_Normal,,,,,8RvB6W53TUq19tKf8rcZzA,iNWQgMYjBEuUO8McTHVbQQ,,,N,0,0,,,2014-04-13 07:21,2014-04-14 16:04,admin,admin,
3041,143138,6971,40337,7842,0,N,N,N,CP_Phys,TT_Task,DT_FixedDrtn,TK_NotStart,CZA-TK-0516-1970,Erection and Fit-up,8402,596,0,10,0,49.667957,49.667957,10,0,0,0,,,,2015-02-17 13:00,2015-02-18 13:00,,2014-12-10 07:00,2014-12-10 17:00,2014-12-10 07:00,2014-12-10 17:00,2014-12-10 07:00,2014-12-10 17:00,2015-02-17 13:00,2015-02-18 13:00,,PT_Normal,,,,,RABujNB0vEWfnNrppocCjA,FwfxeoqIXEquttE6Jq1Iyw,,,N,0,0,,,2014-04-13 07:21,2014-04-14 16:04,admin,admin,
3042,143139,6971,40337,7842,0,N,N,N,CP_Phys,TT_Task,DT_FixedDrtn,TK_NotStart,CZA-TK-0516-1980,Welding,8402,596,0,30,0,62.084946,62.084946,30,60,0,60,,,,2015-02-18 13:00,2015-02-22 13:00,,2014-12-11 07:00,2014-12-14 17:00,2014-12-11 07:00,2014-12-14 17:00,2014-12-11 07:00,2014-12-14 17:00,2015-02-18 13:00,2015-02-22 13:00,,PT_Normal,,,,,1yUfP51LRk+593Xw1zxQtw,F176wMlijkGF5fjLAIAMDg,,,N,0,0,,,2014-04-13 07:21,2014-04-14 16:04,admin,admin,
3043,143140,6971,40338,7842,0,N,N,N,CP_Phys,TT_Task,DT_FixedDrtn,TK_NotStart,CZA-TK-0516-2000,Erection and Fit-up,8402,596,0,10,0,98.708473,98.708473,10,0,0,0,,,,2015-02-22 13:00,2015-02-23 13:00,,2014-12-15 07:00,2014-12-15 17:00,2014-12-15 07:00,2014-12-15 17:00,2014-12-15 07:00,2014-12-15 17:00,2015-02-22 13:00,2015-02-23 13:00,,PT_Normal,,,,,q8mQZGFLwE6kDheAwFXIsg,36J+ccM4pEOv8lQqbuksaA,,,N,0,0,,,2014-04-13 07:21,2014-04-14 16:04,admin,admin,
3044,143141,6971,40338,7842,0,N,N,N,CP_Phys,TT_Task,DT_FixedDrtn,TK_NotStart,CZA-TK-0516-2010,Welding,8402,596,0,30,0,123.385591,123.385591,30,60,0,60,,,,2015-02-23 13:00,2015-02-26 13:00,,2014-12-16 07:00,2014-12-18 17:00,2014-12-16 07:00,2014-12-18 17:00,2014-12-16 07:00,2014-12-18 17:00,2015-02-23 13:00,2015-02-26 13:00,,PT_Normal,,,,,roUgJmZsQkeL04eQqgKEIw,OfKyZtbBfE+aK76NbhjaQw,,,N,0,0,,,2014-04-13 07:21,2014-04-14 16:04,admin,admin,
3045,143142,6971,40338,7842,0,N,N,N,CP_Phys,TT_Task,DT_FixedDrtn,TK_NotStart,CZA-TK-0516-2020,Inspection,8402,596,0,40,0,24.677118,24.677118,40,0,0,0,,,,2015-02-22 13:00,2015-02-26 13:00,,2014-12-15 07:00,2014-12-18 17:00,2014-12-15 07:00,2014-12-18 17:00,2014-12-15 07:00,2014-12-18 17:00,2015-02-22 13:00,2015-02-26 13:00,,PT_Normal,,,,,cIvg2tc1c0qcwo4e0vFeFw,b9dh3bfm+U2lwtjbag4fZA,,,N,0,0,,,2014-04-13 07:21,2014-04-14 16:04,admin,admin,
3046,143143,6971,40339,7842,0,N,N,N,CP_Phys,TT_Task,DT_FixedDrtn,TK_NotStart,CZA-TK-0516-2030,"Cutting, Installation and Fit-up",8402,596,0,20,0,0,0,20,40,0,40,,,,2015-02-26 13:00,2015-03-01 13:00,,2014-12-20 07:00,2014-12-21 17:00,2014-12-20 07:00,2014-12-21 17:00,2014-12-20 07:00,2014-12-21 17:00,2015-02-26 13:00,2015-03-01 13:00,,PT_Normal,,,,,BSgorOeGOE2w76bHH3p9Ow,+tzPEtBpjkO3qGmGhzvYEg,,,N,0,0,,,2014-04-13 07:21,2014-04-14 16:04,admin,admin,
3047,143144,6971,40339,7842,0,N,N,N,CP_Phys,TT_Task,DT_FixedDrtn,TK_NotStart,CZA-TK-0516-2040,Welding,8402,597.333333,1.333333,38.666667,0,0,0,38.666667,0,0,0,,,,2015-03-01 14:20,2015-03-05 13:00,,2014-12-22 07:00,2014-12-25 15:40,2014-12-22 07:00,2014-12-25 15:40,2014-12-22 07:00,2014-12-25 15:40,2015-03-01 14:20,2015-03-05 13:00,,PT_Normal,,,,,4AdzR7qNG0+5T2HD6r399Q,W5nfbK1tY0Oe/9pByvnr6g,,,N,0,0,,,2014-04-13 07:21,2014-04-15 07:43,admin,admin,
3048,143145,6971,40339,7842,0,N,N,N,CP_Phys,TT_Task,DT_FixedDrtn,TK_NotStart,CZA-TK-0516-2050,Inspection,8402,596,0,60,0,0,0,60,0,0,0,,,,2015-02-26 13:00,2015-03-05 13:00,,2014-12-20 07:00,2014-12-25 17:00,2014-12-20 07:00,2014-12-25 17:00,2014-12-20 07:00,2014-12-25 17:00,2015-02-26 13:00,2015-03-05 13:00,,PT_Normal,,,,,5U7KL8WjXEOSVUn5i8J1Xw,GWart6cKgEyEL3E5xUtBFA,,,N,0,0,,,2014-04-13 07:21,2014-04-14 16:04,admin,admin,
3049,143146,6971,40340,7842,0,N,N,N,CP_Phys,TT_Task,DT_FixedDrtn,TK_NotStart,CZA-TK-0516-2060,Laying & Fit-up,8402,596,0,18.833333,0,168.893511,168.893511,18.833333,0,0,0,,,,2015-02-26 13:00,2015-03-01 11:50,,2014-12-20 07:00,2014-12-21 15:50,2014-12-20 07:00,2014-12-21 15:50,2014-12-20 07:00,2014-12-21 15:50,2015-02-26 13:00,2015-03-01 11:50,,PT_Normal,,,,,ybRr+5dua0GnWXLWboFQcA,aZO/qOlupkqQ2QIgh7KT1g,,,N,0,0,,,2014-04-13 07:21,2014-04-15 07:43,admin,admin,
3050,143147,6971,40340,7842,0,N,N,N,CP_Phys,TT_Task,DT_FixedDrtn,TK_NotStart,CZA-TK-0516-2070,Welding,8402,597.166667,1.166667,60,0,211.116889,211.116889,60,120,0,120,,,,2015-03-01 13:00,2015-03-08 13:00,,2014-12-21 15:50,2014-12-28 15:50,2014-12-21 15:50,2014-12-28 15:50,2014-12-21 15:50,2014-12-28 15:50,2015-03-01 13:00,2015-03-08 13:00,,PT_Normal,,,,,fKHTipQeJU2hFKxG4nrUkA,5qVSz0Xu6UStBmxDXyYIwQ,,,N,0,0,,,2014-04-13 07:21,2014-04-15 07:43,admin,admin,
3051,143148,6971,40340,7842,0,N,N,N,CP_Phys,TT_Task,DT_FixedDrtn,TK_NotStart,CZA-TK-0516-2080,Inspection,8402,596,0,80,0,42.223378,42.223378,80,0,0,0,,,,2015-02-26 13:00,2015-03-08 13:00,,2014-12-20 07:00,2014-12-28 17:00,2014-12-20 07:00,2014-12-28 17:00,2014-12-20 07:00,2014-12-28 17:00,2015-02-26 13:00,2015-03-08 13:00,,PT_Normal,,,,,qnTD3ZeCQEu2M5+4fg2Xcw,XAgsUqfvF0mXzXDTPRoBxQ,,,N,0,0,,,2014-04-13 07:21,2014-04-14 16:04,admin,admin,
3052,143149,6971,40450,7842,0,N,N,N,CP_Phys,TT_Task,DT_FixedDrtn,TK_NotStart,CZA-TK-0516-2090,"Cutting of All Holes, Laying and Fit-up",8402,596,0,20,0,0,0,20,40,0,40,,,,2015-03-08 13:00,2015-03-10 13:00,,2014-12-29 07:00,2014-12-30 17:00,2014-12-29 07:00,2014-12-30 17:00,2014-12-29 07:00,2014-12-30 17:00,2015-03-08 13:00,2015-03-10 13:00,,PT_Normal,,,,,m/6cffyvp0e+mEMHIX0pTw,lmwKR1HAs06dac1kffOxgw,,,N,0,0,,,2014-04-13 07:21,2014-04-14 16:04,admin,admin,
3053,143150,6971,40450,7842,0,N,N,N,CP_Phys,TT_Task,DT_FixedDrtn,TK_NotStart,CZA-TK-0516-2100,Welding of Sleeves and Plates,8402,596,0,60,0,0,0,60,120,0,120,,,,2015-03-10 13:00,2015-03-17 13:00,,2014-12-31 07:00,2015-01-06 17:00,2014-12-31 07:00,2015-01-06 17:00,2014-12-31 07:00,2015-01-06 17:00,2015-03-10 13:00,2015-03-17 13:00,,PT_Normal,,,,,LOyZpGwq9k+scn15sdb86Q,f2Adu1bZy0SHFF5T1N3A8w,,,N,0,0,,,2014-04-13 07:21,2014-04-14 16:04,admin,admin,
3054,143151,6971,40450,7842,0,N,N,N,CP_Phys,TT_Task,DT_FixedDrtn,TK_NotStart,CZA-TK-0516-2110,Installation of Leg Support,8402,596,0,20,0,0,0,20,40,0,40,,,,2015-03-17 13:00,2015-03-19 13:00,,2015-01-07 07:00,2015-01-08 17:00,2015-01-07 07:00,2015-01-08 17:00,2015-01-07 07:00,2015-01-08 17:00,2015-03-17 13:00,2015-03-19 13:00,,PT_Normal,,,,,s1t+E0esv0+pQKOfRPmsdg,k7ep7KNklkSbbaq0NPkUuA,,,N,0,0,,,2014-04-13 07:21,2014-04-14 16:04,admin,admin,
3055,143152,6971,40450,7842,0,N,N,N,CP_Phys,TT_Task,DT_FixedDrtn,TK_NotStart,CZA-TK-0516-2120,Inspection,8402,596,0,100,0,0,0,100,0,0,0,,,,2015-03-08 13:00,2015-03-19 13:00,,2014-12-29 07:00,2015-01-08 17:00,2014-12-29 07:00,2015-01-08 17:00,2014-12-29 07:00,2015-01-08 17:00,2015-03-08 13:00,2015-03-19 13:00,,PT_Normal,,,,,nWFSNXDgj0ee/btLxB6fRg,DAY/CF0YP0GyJWmRyFghYA,,,N,0,0,,,2014-04-13 07:21,2014-04-14 16:04,admin,admin,
3056,143153,6971,40451,7842,0,N,N,N,CP_Phys,TT_Task,DT_FixedDrtn,TK_NotStart,CZA-TK-0516-2130,Erection and Fit-up,8402,596,0,10,0,0,0,10,20,0,20,,,,2015-03-01 09:00,2015-03-02 09:00,,2014-12-21 13:00,2014-12-22 13:00,2014-12-21 13:00,2014-12-22 13:00,2014-12-21 13:00,2014-12-22 13:00,2015-03-01 09:00,2015-03-02 09:00,,PT_Normal,,,,,Cs+VSv7s/ke87omMCdGU3w,NKsK1kJS+0irj1ps9FQ8fQ,,,N,0,0,,,2014-04-13 07:21,2014-04-14 16:04,admin,admin,
3057,143154,6971,40451,7842,0,N,N,N,CP_Phys,TT_Task,DT_FixedDrtn,TK_NotStart,CZA-TK-0516-2140,Welding,8402,596,0,30,0,0,0,30,60,0,60,,,,2015-03-02 09:00,2015-03-05 09:00,,2014-12-22 13:00,2014-12-25 13:00,2014-12-22 13:00,2014-12-25 13:00,2014-12-22 13:00,2014-12-25 13:00,2015-03-02 09:00,2015-03-05 09:00,,PT_Normal,,,,,eFYT+t8XZ0q9wni+P0/dqA,GVDmpeuzd0+5+ofRtVfQFw,,,N,0,0,,,2014-04-13 07:21,2014-04-14 16:04,admin,admin,
3058,143155,6971,40451,7842,0,N,N,N,CP_Phys,TT_Task,DT_FixedDrtn,TK_NotStart,CZA-TK-0516-2150,Inspection,8402,596,0,40,0,0,0,40,0,0,0,,,,2015-03-01 09:00,2015-03-05 09:00,,2014-12-21 13:00,2014-12-25 13:00,2014-12-21 13:00,2014-12-25 13:00,2014-12-21 13:00,2014-12-25 13:00,2015-03-01 09:00,2015-03-05 09:00,,PT_Normal,,,,,lx+poXzmXkm0g8S/U5zctw,k284UtPyakejNcqfYRLs4A,,,N,0,0,,,2014-04-13 07:21,2014-04-14 16:04,admin,admin,
3059,143156,6971,40452,7842,0,N,N,N,CP_Phys,TT_Task,DT_FixedDrtn,TK_NotStart,CZA-TK-0516-2160,Erection and Fit-up,8402,596,0,10,0,0,0,10,0,0,0,,,,2015-03-05 09:00,2015-03-07 09:00,,2014-12-25 13:00,2014-12-27 13:00,2014-12-25 13:00,2014-12-27 13:00,2014-12-25 13:00,2014-12-27 13:00,2015-03-05 09:00,2015-03-07 09:00,,PT_Normal,,,,,AIyvb5S/GkqJ5sKzL+1Cyw,TWKE7ZQgGkSM5xAnFFGlJA,,,N,0,0,,,2014-04-13 07:21,2014-04-14 16:04,admin,admin,
3060,143157,6971,40452,7842,0,N,N,N,CP_Phys,TT_Task,DT_FixedDrtn,TK_NotStart,CZA-TK-0516-2170,Welding,8402,596,0,30,0,0,0,30,0,0,0,,,,2015-03-07 09:00,2015-03-10 09:00,,2014-12-27 13:00,2014-12-30 13:00,2014-12-27 13:00,2014-12-30 13:00,2014-12-27 13:00,2014-12-30 13:00,2015-03-07 09:00,2015-03-10 09:00,,PT_Normal,,,,,Xlpj8EV/zUyrqGnpFdjtCQ,5i0IuCbCI0eCE3EmflV8kQ,,,N,0,0,,,2014-04-13 07:21,2014-04-14 16:04,admin,admin,
3061,143158,6971,40452,7842,0,N,N,N,CP_Phys,TT_Task,DT_FixedDrtn,TK_NotStart,CZA-TK-0516-2180,Inspection,8402,596,0,40,0,0,0,40,0,0,0,,,,2015-03-05 09:00,2015-03-10 09:00,,2014-12-25 13:00,2014-12-30 13:00,2014-12-25 13:00,2014-12-30 13:00,2014-12-25 13:00,2014-12-30 13:00,2015-03-05 09:00,2015-03-10 09:00,,PT_Normal,,,,,HQD2rybgyEOQg3e8zAObrA,EgA64yIWJEa09Je7fBu5gA,,,N,0,0,,,2014-04-13 07:21,2014-04-14 16:04,admin,admin,
3062,143159,6971,40344,7842,0,N,N,N,CP_Phys,TT_Task,DT_FixedDrtn,TK_NotStart,CZA-TK-0516-2190,Erection and Fit-up,8402,596,0,10,0,0,0,10,0,0,0,,,,2015-03-10 09:00,2015-03-11 09:00,,2014-12-30 13:00,2014-12-31 13:00,2014-12-30 13:00,2014-12-31 13:00,2014-12-30 13:00,2014-12-31 13:00,2015-03-10 09:00,2015-03-11 09:00,,PT_Normal,,,,,xy6cpi9jTUeuahGor0Sy6g,o+3v19/veE2tDUpTi+A1HQ,,,N,0,0,,,2014-04-13 07:21,2014-04-14 16:04,admin,admin,
3063,143160,6971,40344,7842,0,N,N,N,CP_Phys,TT_Task,DT_FixedDrtn,TK_NotStart,CZA-TK-0516-2200,Welding,8402,596,0,30,0,0,0,30,60,0,60,,,,2015-03-11 09:00,2015-03-15 09:00,,2014-12-31 13:00,2015-01-04 13:00,2014-12-31 13:00,2015-01-04 13:00,2014-12-31 13:00,2015-01-04 13:00,2015-03-11 09:00,2015-03-15 09:00,,PT_Normal,,,,,Ic4IoIuprk2JCgxsPo3poA,cCOE/YF6OUOpKJocwqd39w,,,N,0,0,,,2014-04-13 07:21,2014-04-14 16:04,admin,admin,
3064,143161,6971,40344,7842,0,N,N,N,CP_Phys,TT_Task,DT_FixedDrtn,TK_NotStart,CZA-TK-0516-2210,Inspection,8402,596,0,40,0,0,0,40,0,0,0,,,,2015-03-10 09:00,2015-03-15 09:00,,2014-12-30 13:00,2015-01-04 13:00,2014-12-30 13:00,2015-01-04 13:00,2014-12-30 13:00,2015-01-04 13:00,2015-03-10 09:00,2015-03-15 09:00,,PT_Normal,,,,,8wy09Csg6UOjQjbi2KHwRA,+oRkLQHm9kGqgJibadHI4A,,,N,0,0,,,2014-04-13 07:21,2014-04-14 16:04,admin,admin,
3065,143162,6971,40345,7842,0,N,N,N,CP_Phys,TT_Task,DT_FixedDrtn,TK_NotStart,CZA-TK-0516-2220,Erection and Fit-up,8402,596,0,10,0,98.708473,98.708473,10,0,0,0,,,,2015-03-15 09:00,2015-03-16 09:00,,2015-01-04 13:00,2015-01-05 13:00,2015-01-04 13:00,2015-01-05 13:00,2015-01-04 13:00,2015-01-05 13:00,2015-03-15 09:00,2015-03-16 09:00,,PT_Normal,,,,,wZXUnuiiEUqvuxM0pd/4hA,AmuRuUGy40acFQB0ogYRTA,,,N,0,0,,,2014-04-13 07:21,2014-04-14 16:04,admin,admin,
3066,143163,6971,40345,7842,0,N,N,N,CP_Phys,TT_Task,DT_FixedDrtn,TK_NotStart,CZA-TK-0516-2230,Welding,8402,596,0,30,0,123.385591,123.385591,30,0,0,0,,,,2015-03-16 09:00,2015-03-19 09:00,,2015-01-05 13:00,2015-01-08 13:00,2015-01-05 13:00,2015-01-08 13:00,2015-01-05 13:00,2015-01-08 13:00,2015-03-16 09:00,2015-03-19 09:00,,PT_Normal,,,,,AIl7mcIef0GuFUBWNIpv5Q,AtJ7Fgq+wU+IBOvR8/03LQ,,,N,0,0,,,2014-04-13 07:21,2014-04-14 16:04,admin,admin,
3067,143164,6971,40345,7842,0,N,N,N,CP_Phys,TT_Task,DT_FixedDrtn,TK_NotStart,CZA-TK-0516-2240,Inspection,8402,596,0,40,0,24.677118,24.677118,40,0,0,0,,,,2015-03-15 09:00,2015-03-19 09:00,,2015-01-04 13:00,2015-01-08 13:00,2015-01-04 13:00,2015-01-08 13:00,2015-01-04 13:00,2015-01-08 13:00,2015-03-15 09:00,2015-03-19 09:00,,PT_Normal,,,,,749Vh/hDUUy3H6YqLyIwOg,scPz0phTZk2J4PElkw3gKA,,,N,0,0,,,2014-04-13 07:21,2014-04-14 16:04,admin,admin,
3068,143165,6971,40346,7842,0,N,N,N,CP_Phys,TT_Task,DT_FixedDrtn,TK_NotStart,CZA-TK-0516-2250,Erection and Fit-up,8402,596,0,10,0,177.507934,177.507934,10,0,0,0,,,,2015-03-19 09:00,2015-03-21 09:00,,2015-01-08 13:00,2015-01-10 13:00,2015-01-08 13:00,2015-01-10 13:00,2015-01-08 13:00,2015-01-10 13:00,2015-03-19 09:00,2015-03-21 09:00,,PT_Normal,,,,,UZ9xLR9v3U+Y5wfB7slCjQ,pLJCh3eJjU2JWOP58Xfcow,,,N,0,0,,,2014-04-13 07:21,2014-04-14 16:04,admin,admin,
3069,143166,6971,40346,7842,0,N,N,N,CP_Phys,TT_Task,DT_FixedDrtn,TK_NotStart,CZA-TK-0516-2260,Welding,8402,596,0,30,0,221.884917,221.884917,30,60,0,60,,,,2015-03-21 09:00,2015-03-24 09:00,,2015-01-10 13:00,2015-01-13 13:00,2015-01-10 13:00,2015-01-13 13:00,2015-01-10 13:00,2015-01-13 13:00,2015-03-21 09:00,2015-03-24 09:00,,PT_Normal,,,,,0iALFtAUhk2/5gNoq0Xtcg,IKShyckjtEGkgyAEVmlMQQ,,,N,0,0,,,2014-04-13 07:21,2014-04-14 16:04,admin,admin,
3070,143167,6971,40346,7842,0,N,N,N,CP_Phys,TT_Task,DT_FixedDrtn,TK_NotStart,CZA-TK-0516-2270,Inspection,8402,596,0,40,0,44.376983,44.376983,40,0,0,0,,,,2015-03-19 09:00,2015-03-24 09:00,,2015-01-08 13:00,2015-01-13 13:00,2015-01-08 13:00,2015-01-13 13:00,2015-01-08 13:00,2015-01-13 13:00,2015-03-19 09:00,2015-03-24 09:00,,PT_Normal,,,,,zZMKEWZz6UCa5/DXoubmWQ,UKl43O86ZUyHjSxEm6SH/A,,,N,0,0,,,2014-04-13 07:21,2014-04-14 16:04,admin,admin,
3071,143168,6971,40347,7842,0,N,N,N,CP_Phys,TT_Task,DT_FixedDrtn,TK_NotStart,CZA-TK-0516-2280,"Cutting, Installation and Fit-up",8402,596,0,20,0,0,0,20,40,0,40,,,,2015-03-24 09:00,2015-03-26 09:00,,2015-01-13 13:00,2015-01-15 13:00,2015-01-13 13:00,2015-01-15 13:00,2015-01-13 13:00,2015-01-15 13:00,2015-03-24 09:00,2015-03-26 09:00,,PT_Normal,,,,,/hVgxZIQF0aM0XIkoGiclQ,mSk/bVHicEGF+9K2hnAzag,,,N,0,0,,,2014-04-13 07:21,2014-04-14 16:04,admin,admin,
3072,143169,6971,40347,7842,0,N,N,N,CP_Phys,TT_Task,DT_FixedDrtn,TK_NotStart,CZA-TK-0516-2290,Welding,8402,596,0,30,0,0,0,30,60,0,60,,,,2015-03-26 09:00,2015-03-30 09:00,,2015-01-15 13:00,2015-01-19 13:00,2015-01-15 13:00,2015-01-19 13:00,2015-01-15 13:00,2015-01-19 13:00,2015-03-26 09:00,2015-03-30 09:00,,PT_Normal,,,,,b+9CPdf3GEaZf1BVY61NvQ,MAfINfUKZ0maNAl77rlBvw,,,N,0,0,,,2014-04-13 07:21,2014-04-14 16:04,admin,admin,
3073,143170,6971,40347,7842,0,N,N,N,CP_Phys,TT_Task,DT_FixedDrtn,TK_NotStart,CZA-TK-0516-2300,Inspection,8402,596,0,50,0,0,0,50,0,0,0,,,,2015-03-24 09:00,2015-03-30 09:00,,2015-01-13 13:00,2015-01-19 13:00,2015-01-13 13:00,2015-01-19 13:00,2015-01-13 13:00,2015-01-19 13:00,2015-03-24 09:00,2015-03-30 09:00,,PT_Normal,,,,,xMQM4QOH7kmQbh6WzLiT8g,2KLl51yZ+EuTCU/f0FD0jw,,,N,0,0,,,2014-04-13 07:21,2014-04-14 16:04,admin,admin,
3074,143171,6971,40557,7842,0,N,N,N,CP_Phys,TT_Task,DT_FixedDrtn,TK_NotStart,CZA-TK-0516-2310,Erection and Fit-up,8402,596,0,10,0,3.256388,3.256388,10,20,0,20,,,,2015-03-30 09:00,2015-03-31 09:00,,2015-01-19 13:00,2015-01-20 13:00,2015-01-19 13:00,2015-01-20 13:00,2015-01-19 13:00,2015-01-20 13:00,2015-03-30 09:00,2015-03-31 09:00,,PT_Normal,,,,,w6v6nD7vYUK4YBKWdZE/4Q,MENntYKyNkiky5Z7LQKiGQ,,,N,0,0,,,2014-04-13 07:21,2014-04-14 16:04,admin,admin,
3075,143172,6971,40557,7842,0,N,N,N,CP_Phys,TT_Task,DT_FixedDrtn,TK_NotStart,CZA-TK-0516-2320,Welding,8402,596,0,30,0,4.070485,4.070485,30,60,0,60,,,,2015-03-31 09:00,2015-04-04 09:00,,2015-01-20 13:00,2015-01-24 13:00,2015-01-20 13:00,2015-01-24 13:00,2015-01-20 13:00,2015-01-24 13:00,2015-03-31 09:00,2015-04-04 09:00,,PT_Normal,,,,,YOrMjiopk0mktpid7eyQXQ,3uM78wZrI0C1iyILkeT4Dw,,,N,0,0,,,2014-04-13 07:21,2014-04-14 16:04,admin,admin,
3076,143173,6971,40557,7842,0,N,N,N,CP_Phys,TT_Task,DT_FixedDrtn,TK_NotStart,CZA-TK-0516-2330,Inspection,8402,596,0,40,0,0.814097,0.814097,40,0,0,0,,,,2015-03-30 09:00,2015-04-04 09:00,,2015-01-19 13:00,2015-01-24 13:00,2015-01-19 13:00,2015-01-24 13:00,2015-01-19 13:00,2015-01-24 13:00,2015-03-30 09:00,2015-04-04 09:00,,PT_Normal,,,,,LkSGSC+YUEibcsm5hCPTtA,lTU4daOkoUKLNUz2UBCQYA,,,N,0,0,,,2014-04-13 07:21,2014-04-14 16:04,admin,admin,
3077,143174,6971,40558,7842,0,N,N,N,CP_Phys,TT_Task,DT_FixedDrtn,TK_NotStart,CZA-TK-0516-2340,Laying and Fit-up,8402,596,0,20,0,54.279695,54.279695,20,40,0,40,,,,2015-04-04 09:00,2015-04-06 09:00,,2015-01-24 13:00,2015-01-26 13:00,2015-01-24 13:00,2015-01-26 13:00,2015-01-24 13:00,2015-01-26 13:00,2015-04-04 09:00,2015-04-06 09:00,,PT_Normal,,,,,A9D0fYGDMkmmyeCs87qSkA,7JbpXTSF+UeK2FbYUdtrsw,,,N,0,0,,,2014-04-13 07:21,2014-04-14 16:04,admin,admin,
3078,143175,6971,40558,7842,0,N,N,N,CP_Phys,TT_Task,DT_FixedDrtn,TK_NotStart,CZA-TK-0516-2350,Welding,8402,596,0,40,0,67.849619,67.849619,40,80,0,80,,,,2015-04-06 09:00,2015-04-11 09:00,,2015-01-26 13:00,2015-01-31 13:00,2015-01-26 13:00,2015-01-31 13:00,2015-01-26 13:00,2015-01-31 13:00,2015-04-06 09:00,2015-04-11 09:00,,PT_Normal,,,,,8zrrfIBYFUeXVF2XZgSZWA,VeN3LX75UUePijaufXbewg,,,N,0,0,,,2014-04-13 07:21,2014-04-14 16:04,admin,admin,
3079,143176,6971,40558,7842,0,N,N,N,CP_Phys,TT_Task,DT_FixedDrtn,TK_NotStart,CZA-TK-0516-2360,Inspection,8402,596,0,60,0,13.569924,13.569924,60,0,0,0,,,,2015-04-04 09:00,2015-04-11 09:00,,2015-01-24 13:00,2015-01-31 13:00,2015-01-24 13:00,2015-01-31 13:00,2015-01-24 13:00,2015-01-31 13:00,2015-04-04 09:00,2015-04-11 09:00,,PT_Normal,,,,,6As/csK6zkG1a7wnJDzVpQ,qlq7JgLweUyG4LFmlcfBiw,,,N,0,0,,,2014-04-13 07:21,2014-04-14 16:04,admin,admin,
3080,143177,6971,40559,7842,0,N,N,N,CP_Phys,TT_Task,DT_FixedDrtn,TK_NotStart,CZA-TK-0516-2370,Laying and Fit-up,8402,596,0,10,0,83.878349,83.878349,10,20,0,20,,,,2015-04-11 09:00,2015-04-12 09:00,,2015-01-31 13:00,2015-02-01 13:00,2015-01-31 13:00,2015-02-01 13:00,2015-01-31 13:00,2015-02-01 13:00,2015-04-11 09:00,2015-04-12 09:00,,PT_Normal,,,,,xiLOSQ69zk+yFemUgxBN/Q,CiIN1UGRwkitsoczVmdWxg,,,N,0,0,,,2014-04-13 07:21,2014-04-14 16:04,admin,admin,
3081,143178,6971,40559,7842,0,N,N,N,CP_Phys,TT_Task,DT_FixedDrtn,TK_NotStart,CZA-TK-0516-2380,Welding,8402,596,0,30,0,104.847936,104.847936,30,60,0,60,,,,2015-04-12 09:00,2015-04-15 09:00,,2015-02-01 13:00,2015-02-04 13:00,2015-02-01 13:00,2015-02-04 13:00,2015-02-01 13:00,2015-02-04 13:00,2015-04-12 09:00,2015-04-15 09:00,,PT_Normal,,,,,7zKTz4NxIku5DyRpafqwrQ,uGM2yOasFEWSVkprWIaILA,,,N,0,0,,,2014-04-13 07:21,2014-04-14 16:04,admin,admin,
3082,143179,6971,40559,7842,0,N,N,N,CP_Phys,TT_Task,DT_FixedDrtn,TK_NotStart,CZA-TK-0516-2390,Inspection,8402,596,0,40,0,20.969587,20.969587,40,0,0,0,,,,2015-04-11 09:00,2015-04-15 09:00,,2015-01-31 13:00,2015-02-04 13:00,2015-01-31 13:00,2015-02-04 13:00,2015-01-31 13:00,2015-02-04 13:00,2015-04-11 09:00,2015-04-15 09:00,,PT_Normal,,,,,k0cDswpbL0+PYUYGLi6GEQ,/D0s0VDZAkmDRQ1RItRnAg,,,N,0,0,,,2014-04-13 07:21,2014-04-14 16:04,admin,admin,
3083,143180,6971,40351,7842,0,N,N,N,CP_Phys,TT_Task,DT_FixedDrtn,TK_NotStart,CZA-TK-0516-2400,Installation and Fit-up,8402,596,0,20,0,0,0,20,40,0,40,,,,2015-04-15 09:00,2015-04-18 09:00,,2015-02-04 13:00,2015-02-07 13:00,2015-02-04 13:00,2015-02-07 13:00,2015-02-04 13:00,2015-02-07 13:00,2015-04-15 09:00,2015-04-18 09:00,,PT_Normal,,,,,2VTZk0qp70qRWpLsdP22Sw,qveOyBMvuUC/sMlUK8IhFw,,,N,0,0,,,2014-04-13 07:21,2014-04-14 16:04,admin,admin,
3084,143181,6971,40351,7842,0,N,N,N,CP_Phys,TT_Task,DT_FixedDrtn,TK_NotStart,CZA-TK-0516-2410,Welding,8402,596,0,40,0,0,0,40,80,0,80,,,,2015-04-18 09:00,2015-04-22 09:00,,2015-02-07 13:00,2015-02-11 13:00,2015-02-07 13:00,2015-02-11 13:00,2015-02-07 13:00,2015-02-11 13:00,2015-04-18 09:00,2015-04-22 09:00,,PT_Normal,,,,,HzwPZnZ/9USrVdAgoQvWwQ,QevGiSMBO0uPw0M5Onx5hQ,,,N,0,0,,,2014-04-13 07:21,2014-04-14 16:04,admin,admin,
3085,143182,6971,40351,7842,0,N,N,N,CP_Phys,TT_Task,DT_FixedDrtn,TK_NotStart,CZA-TK-0516-2420,Inspection,8402,596,0,60,0,0,0,60,0,0,0,,,,2015-04-15 09:00,2015-04-22 09:00,,2015-02-04 13:00,2015-02-11 13:00,2015-02-04 13:00,2015-02-11 13:00,2015-02-04 13:00,2015-02-11 13:00,2015-04-15 09:00,2015-04-22 09:00,,PT_Normal,,,,,oF5B/4rA10y8E9FK8jLhUQ,Vtb4NBstLE6xg9KATZiWzA,,,N,0,0,,,2014-04-13 07:21,2014-04-14 16:04,admin,admin,
3086,143183,6971,40352,7842,0,N,N,N,CP_Phys,TT_Task,DT_FixedDrtn,TK_NotStart,CZA-TK-0516-2440,Welding,8402,596,0,110,0,0,0,110,220,0,220,,,,2015-04-20 15:00,2015-05-03 15:00,,2015-02-10 09:00,2015-02-23 09:00,2015-02-10 09:00,2015-02-23 09:00,2015-02-10 09:00,2015-02-23 09:00,2015-04-20 15:00,2015-05-03 15:00,,PT_Normal,,,,,jJ7ZY/a4uk6e5mna+ZCM7g,B+LZXQ60vkCcAYBtdgES8g,,,N,0,0,,,2014-04-13 07:21,2014-04-14 16:04,admin,admin,
3087,143184,6971,40352,7842,0,N,N,N,CP_Phys,TT_Task,DT_FixedDrtn,TK_NotStart,CZA-TK-0516-2450,Inspection,8402,596,0,140,0,0,0,140,0,0,0,,,,2015-04-16 15:00,2015-05-03 15:00,,2015-02-07 09:00,2015-02-23 09:00,2015-02-07 09:00,2015-02-23 09:00,2015-02-07 09:00,2015-02-23 09:00,2015-04-16 15:00,2015-05-03 15:00,,PT_Normal,,,,,1Py9cvqQHEG1cGTqAN19sA,SYv8FbwZyUarmWK9d9vPTw,,,N,0,0,,,2014-04-13 07:21,2014-04-14 16:04,admin,admin,
3088,143185,6971,40352,7842,0,N,N,N,CP_Phys,TT_Task,DT_FixedDrtn,TK_NotStart,CZA-TK-0516-2430,Erection and Fit-up,8402,596,0,30,0,0,0,30,0,0,0,,,,2015-04-16 15:00,2015-04-20 15:00,,2015-02-07 09:00,2015-02-10 09:00,2015-02-07 09:00,2015-02-10 09:00,2015-02-07 09:00,2015-02-10 09:00,2015-04-16 15:00,2015-04-20 15:00,,PT_Normal,,,,,/SjHui2MdUysMBp6hagGaA,oNUS0S8AUUqSFrCQT8XOHw,,,N,0,0,,,2014-04-13 07:21,2014-04-14 16:04,admin,admin,
3089,143186,6971,40353,7842,0,N,N,N,CP_Phys,TT_Task,DT_FixedDrtn,TK_NotStart,CZA-TK-0516-2460,Erection and Fit-up,8402,596,0,30,0,0,0,30,0,0,0,,,,2015-04-16 15:00,2015-04-20 15:00,,2015-02-07 09:00,2015-02-10 09:00,2015-02-07 09:00,2015-02-10 09:00,2015-02-07 09:00,2015-02-10 09:00,2015-04-16 15:00,2015-04-20 15:00,,PT_Normal,,,,,UDH3rzvhqUSuKrQ0gyBJ2A,B8tZGMOkJEe6kIxk1HAGdg,,,N,0,0,,,2014-04-13 07:21,2014-04-14 16:04,admin,admin,
3090,143187,6971,40353,7842,0,N,N,N,CP_Phys,TT_Task,DT_FixedDrtn,TK_NotStart,CZA-TK-0516-2470,Welding,8402,596,0,110,0,0,0,110,0,0,0,,,,2015-04-20 15:00,2015-05-03 15:00,,2015-02-10 09:00,2015-02-23 09:00,2015-02-10 09:00,2015-02-23 09:00,2015-02-10 09:00,2015-02-23 09:00,2015-04-20 15:00,2015-05-03 15:00,,PT_Normal,,,,,g/6P3t+jL0OUUj+JaCDT1A,21y1y9dcBUaWlKiFYwMjUQ,,,N,0,0,,,2014-04-13 07:21,2014-04-14 16:04,admin,admin,
3091,143188,6971,40353,7842,0,N,N,N,CP_Phys,TT_Task,DT_FixedDrtn,TK_NotStart,CZA-TK-0516-2480,Inspection,8402,596,0,140,0,0,0,140,0,0,0,,,,2015-04-16 15:00,2015-05-03 15:00,,2015-02-07 09:00,2015-02-23 09:00,2015-02-07 09:00,2015-02-23 09:00,2015-02-07 09:00,2015-02-23 09:00,2015-04-16 15:00,2015-05-03 15:00,,PT_Normal,,,,,7G79eu2d3k+QjU22CJG/CA,nxWp2Q2DRkGfVthiXj8f1A,,,N,0,0,,,2014-04-13 07:21,2014-04-14 16:04,admin,admin,
3092,143189,6971,40354,7842,0,N,N,N,CP_Phys,TT_Task,DT_FixedDrtn,TK_NotStart,CZA-TK-0516-2490,Installation of Primary and Secondary Seal,8402,596,0,40,0,0,0,40,0,0,0,,,,2015-05-03 15:00,2015-05-07 15:00,,2015-02-23 09:00,2015-02-28 09:00,2015-02-23 09:00,2015-02-28 09:00,2015-02-23 09:00,2015-02-28 09:00,2015-05-03 15:00,2015-05-07 15:00,,PT_Normal,,,,,afC91kum10+rYPUuGLtgKw,iRVFebREtkK2DSWD1XstOA,,,N,0,0,,,2014-04-13 07:21,2014-04-14 16:04,admin,admin,
3093,143190,6971,40354,7842,0,N,N,N,CP_Phys,TT_Task,DT_FixedDrtn,TK_NotStart,CZA-TK-0516-2500,Inspection,8402,596,0,40,0,0,0,40,0,0,0,,,,2015-05-03 15:00,2015-05-07 15:00,,2015-02-23 09:00,2015-02-28 09:00,2015-02-23 09:00,2015-02-28 09:00,2015-02-23 09:00,2015-02-28 09:00,2015-05-03 15:00,2015-05-07 15:00,,PT_Normal,,,,,SBx7k1RCBUmDPDmEGYOeAA,ZzOsWTtCW0u+RNQmzW0UCg,,,N,0,0,,,2014-04-13 07:21,2014-04-14 16:04,admin,admin,
3094,143191,6971,40355,7842,0,N,N,N,CP_Phys,TT_Task,DT_FixedDrtn,TK_NotStart,CZA-TK-0516-2510,Insulation Works,8402,596,0,200,0,0,0,200,0,0,0,,,,2015-05-07 15:00,2015-05-31 15:00,,2015-02-28 09:00,2015-03-23 09:00,2015-02-28 09:00,2015-03-23 09:00,2015-02-28 09:00,2015-03-23 09:00,2015-05-07 15:00,2015-05-31 15:00,,PT_Normal,,,,,X+YMujNiaEeBf+Y5u6MdPA,,,,N,0,0,,,2014-04-13 07:21,2014-04-14 16:04,admin,admin,
3095,143192,6971,40355,7842,0,N,N,N,CP_Phys,TT_Task,DT_FixedDrtn,TK_NotStart,CZA-TK-0516-2520,Inspection,8402,596,0,10,0,0,0,10,0,0,0,,,,2015-05-31 15:00,2015-06-01 15:00,,2015-03-23 09:00,2015-03-24 09:00,2015-03-23 09:00,2015-03-24 09:00,2015-03-23 09:00,2015-03-24 09:00,2015-05-31 15:00,2015-06-01 15:00,,PT_Normal,,,,,Roe19/59ikKbZqDoFrN/pw,,,,N,0,0,,,2014-04-13 07:21,2014-04-14 16:04,admin,admin,
3096,143193,6971,40038,7842,0,N,N,N,CP_Phys,TT_Task,DT_FixedDrtn,TK_NotStart,CZA-TK-0516-1840,"Cutting, Bevelling & Rolling of Curb Angle",8507,3420,0,20,0,7.4385,7.4385,20,0,0,0,,,,2015-03-30 13:00,2015-04-01 13:00,,2014-02-24 13:00,2014-02-26 13:00,2014-02-24 13:00,2014-02-26 13:00,2014-02-24 13:00,2014-02-26 13:00,2015-03-30 13:00,2015-04-01 13:00,,PT_Normal,,,,,nqe0+d0KJ0Wgj0+c5Gm6UA,8rYJ7jym9EOq/aHZVD78Ng,,,N,0,0,,,2014-04-13 07:21,2014-04-14 17:03,admin,admin,
3097,143194,6971,40038,7842,0,N,N,N,CP_Phys,TT_Task,DT_FixedDrtn,TK_NotStart,CZA-TK-0516-1850,"Cutting, Fit-up and Welding of Roof Structure",8507,3420,0,40,0,123.99,123.99,40,0,0,0,,,,2015-04-02 07:00,2015-04-06 17:00,,2014-02-27 07:00,2014-03-03 17:00,2014-02-27 07:00,2014-03-03 17:00,2014-02-27 07:00,2014-03-03 17:00,2015-04-02 07:00,2015-04-06 17:00,,PT_Normal,,,,,I4wl6ucP/Ee6i9Uw7lPSOQ,2UCo15ZBVEutnreJGcFdZg,,,N,0,0,,,2014-04-13 07:21,2014-04-14 17:03,admin,admin,
3098,143195,6971,40038,7842,0,N,N,N,CP_Phys,TT_Task,DT_FixedDrtn,TK_NotStart,CZA-TK-0516-1860,Cutting of Roof Plates,8507,3420,0,10,0,191.6016,191.6016,10,0,0,0,,,,2015-04-07 07:00,2015-04-07 17:00,,2014-03-04 07:00,2014-03-04 17:00,2014-03-04 07:00,2014-03-04 17:00,2014-03-04 07:00,2014-03-04 17:00,2015-04-07 07:00,2015-04-07 17:00,,PT_Normal,,,,,t8dIuBxG20eszjrPjBfgXw,,,,N,0,0,,,2014-04-13 07:21,2014-04-14 17:03,admin,admin,
3099,143196,6971,40038,7842,0,N,N,N,CP_Phys,TT_Task,DT_FixedDrtn,TK_NotStart,CZA-TK-0516-1870,"Cutting, Fit-up and Welding of Roof Nozzles, Manholes and Other Appurtanances",8507,3420,0,50,0,0,0,50,0,0,0,,,,2015-04-08 07:00,2015-04-13 17:00,,2014-03-05 07:00,2014-03-10 17:00,2014-03-05 07:00,2014-03-10 17:00,2014-03-05 07:00,2014-03-10 17:00,2015-04-08 07:00,2015-04-13 17:00,,PT_Normal,,,,,mc1jGhuEuEmAgS1Iip8HMA,,,,N,0,0,,,2014-04-13 07:21,2014-04-14 17:03,admin,admin,
3100,143197,6971,40038,7842,0,N,N,N,CP_Phys,TT_Task,DT_FixedDrtn,TK_NotStart,CZA-TK-0516-1880,"Cutting, Fit-up and Welding of Roof Platform,Gratings and Stairway",8507,3420,0,70,0,0,0,70,0,0,0,,,,2015-04-08 15:00,2015-04-16 15:00,,2014-03-05 15:00,2014-03-13 15:00,2014-03-05 15:00,2014-03-13 15:00,2014-03-05 15:00,2014-03-13 15:00,2015-04-08 15:00,2015-04-16 15:00,,PT_Normal,,,,,OF61c+MrKU2nodXmtG0zCg,,,,N,0,0,,,2014-04-13 07:21,2014-04-14 17:03,admin,admin,
3101,143198,6971,40038,7842,0,N,N,N,CP_Phys,TT_Task,DT_FixedDrtn,TK_NotStart,CZA-TK-0516-1890,"Cutting, Fit-up and Welding of Stairway Platform, Gratings and Handrails",8507,3420,2824,70,0,0,0,70,0,0,0,,,,2015-04-08 15:00,2015-04-16 15:00,,2014-03-05 15:00,2014-03-13 15:00,2014-03-05 15:00,2014-03-13 15:00,2014-03-05 15:00,2014-03-13 15:00,2015-04-08 15:00,2015-04-16 15:00,,PT_Normal,,,,,pL8yNeoo006N02oxgY+Vxg,,,,N,0,0,,,2014-04-13 07:21,2014-04-14 17:03,admin,admin,
3102,143199,6971,40038,7842,0,N,N,N,CP_Phys,TT_Task,DT_FixedDrtn,TK_NotStart,CZA-TK-0516-1710,Cutting of Annular Plate,8507,2922,0,10,0,61.167,61.167,10,0,0,0,,,,2015-01-15 09:00,2015-01-17 09:00,,2014-02-09 07:00,2014-02-09 17:00,2014-02-09 07:00,2014-02-09 17:00,2014-02-09 07:00,2014-02-09 17:00,2015-01-15 09:00,2015-01-17 09:00,,PT_Normal,,,,,9YEYmn/y+EivlvdqXHMG1g,xJncpA0LVUaOu7SY1m/lJw,,,N,0,0,,,2014-04-13 07:21,2014-04-14 17:03,admin,admin,
3103,143200,6971,40038,7842,0,N,N,N,CP_Phys,TT_Task,DT_FixedDrtn,TK_NotStart,CZA-TK-0516-1720,Cutting of Bottom Plates,8507,3420,0,10,0,152.6625,152.6625,10,0,0,0,,,,2015-03-16 07:00,2015-03-16 17:00,,2014-02-10 07:00,2014-02-10 17:00,2014-02-10 07:00,2014-02-10 17:00,2014-02-10 07:00,2014-02-10 17:00,2015-03-16 07:00,2015-03-16 17:00,,PT_Normal,,,,,K7cfvY1a/0qyLM9KqaM0qg,MHaCC7raV0umMbJhoBSNtQ,,,N,0,0,,,2014-04-13 07:21,2014-04-14 17:03,admin,admin,
3104,143201,6971,40038,7842,0,N,N,N,CP_Phys,TT_Task,DT_FixedDrtn,TK_NotStart,CZA-TK-0516-1730,"Cutting, Bevelling & Rolling of Shell No.1",8507,3420,0,10,0,113.4555,113.4555,10,0,0,0,,,,2015-03-17 07:00,2015-03-17 17:00,,2014-02-11 07:00,2014-02-11 17:00,2014-02-11 07:00,2014-02-11 17:00,2014-02-11 07:00,2014-02-11 17:00,2015-03-17 07:00,2015-03-17 17:00,,PT_Normal,,,,,o4+EtahyTESbzRdD6cyXNg,/AolqPFGn0SuWXjNKJWW9A,,,N,0,0,,,2014-04-13 07:21,2014-04-14 17:03,admin,admin,
3105,143202,6971,40038,7842,0,N,N,N,CP_Phys,TT_Task,DT_FixedDrtn,TK_NotStart,CZA-TK-0516-1740,"Cutting, Bevelling & Rolling of Shell No.2",8507,3420,0,10,0,225.47775,225.47775,10,0,0,0,,,,2015-03-17 07:00,2015-03-17 17:00,,2014-02-11 07:00,2014-02-11 17:00,2014-02-11 07:00,2014-02-11 17:00,2014-02-11 07:00,2014-02-11 17:00,2015-03-17 07:00,2015-03-17 17:00,,PT_Normal,,,,,+uEkf+qMi0uG6CyoKvdZBg,gRUl5A8BJkudRdETMRC6QA,,,N,0,0,,,2014-04-13 07:21,2014-04-14 17:03,admin,admin,
3106,143203,6971,40038,7842,0,N,N,N,CP_Phys,TT_Task,DT_FixedDrtn,TK_NotStart,CZA-TK-0516-1750,"Cutting, Fit-up and Welding of Shell Nozzles,Manholes and Other Appurtanances",8507,3420,0,50,0,0,0,50,0,0,0,,,,2015-03-17 07:00,2015-03-22 17:00,,2014-02-11 07:00,2014-02-16 17:00,2014-02-11 07:00,2014-02-16 17:00,2014-02-11 07:00,2014-02-16 17:00,2015-03-17 07:00,2015-03-22 17:00,,PT_Normal,,,,,Jfme5+st+0aCsv3e5Cn6ug,U2vTWJYPcEG5SniGwgosmg,,,N,0,0,,,2014-04-13 07:21,2014-04-14 17:03,admin,admin,
3107,143204,6971,40038,7842,0,N,N,N,CP_Phys,TT_Task,DT_FixedDrtn,TK_NotStart,CZA-TK-0516-1760,Cutting of Floating Deck Plate,8507,3420,0,10,0,385.8,385.8,10,0,0,0,,,,2015-03-23 07:00,2015-03-23 17:00,,2014-02-17 07:00,2014-02-17 17:00,2014-02-17 07:00,2014-02-17 17:00,2014-02-17 07:00,2014-02-17 17:00,2015-03-23 07:00,2015-03-23 17:00,,PT_Normal,,,,,nQLj4CYvaEmqAM37ChPqYQ,VjGhdSGoHUaQ5+XVwWbWwQ,,,N,0,0,,,2014-04-13 07:21,2014-04-14 17:03,admin,admin,
3108,143205,6971,40038,7842,0,N,N,N,CP_Phys,TT_Task,DT_FixedDrtn,TK_NotStart,CZA-TK-0516-1770,"Cutting,Fit up and Welding of Pontoon",8507,3420,0,10,0,0,0,10,0,0,0,,,,2015-03-24 07:00,2015-03-24 17:00,,2014-02-18 07:00,2014-02-18 17:00,2014-02-18 07:00,2014-02-18 17:00,2014-02-18 07:00,2014-02-18 17:00,2015-03-24 07:00,2015-03-24 17:00,,PT_Normal,,,,,R4354YL9jU6pcWI4PIKbNg,mL9foe+F20y1J690zS6ctw,,,N,0,0,,,2014-04-13 07:21,2014-04-14 17:03,admin,admin,
3109,143206,6971,40038,7842,0,N,N,N,CP_Phys,TT_Task,DT_FixedDrtn,TK_NotStart,CZA-TK-0516-1780,Cutting of Floating Legs and Manholes,8507,3420,0,10,0,0,0,10,0,0,0,,,,2015-03-25 07:00,2015-03-25 17:00,,2014-02-19 07:00,2014-02-19 17:00,2014-02-19 07:00,2014-02-19 17:00,2014-02-19 07:00,2014-02-19 17:00,2015-03-25 07:00,2015-03-25 17:00,,PT_Normal,,,,,vHUUaTeuSE+SNmypY5APJA,PIUt70cHDkee8Mtyy9WFfg,,,N,0,0,,,2014-04-13 07:21,2014-04-14 17:03,admin,admin,
3110,143207,6971,40038,7842,0,N,N,N,CP_Phys,TT_Task,DT_FixedDrtn,TK_NotStart,CZA-TK-0516-1790,"Cutting, Bevelling & Rolling of Shell No.3",8507,3420,0,10,0,0,0,10,0,0,0,,,,2015-03-26 07:00,2015-03-26 17:00,,2014-02-20 07:00,2014-02-20 17:00,2014-02-20 07:00,2014-02-20 17:00,2014-02-20 07:00,2014-02-20 17:00,2015-03-26 07:00,2015-03-26 17:00,,PT_Normal,,,,,7O34yfP3uEe27GWL+oZftg,ixLWF9yhAUex9uJtrHp4Vw,,,N,0,0,,,2014-04-13 07:21,2014-04-14 17:03,admin,admin,
3111,143208,6971,40038,7842,0,N,N,N,CP_Phys,TT_Task,DT_FixedDrtn,TK_NotStart,CZA-TK-0516-1800,"Cutting, Bevelling & Rolling of Shell No.4",8507,3420,0,10,0,0,0,10,0,0,0,,,,2015-03-26 07:00,2015-03-26 17:00,,2014-02-20 07:00,2014-02-20 17:00,2014-02-20 07:00,2014-02-20 17:00,2014-02-20 07:00,2014-02-20 17:00,2015-03-26 07:00,2015-03-26 17:00,,PT_Normal,,,,,HXX57CJdcUWB6E1wwEiKgw,sqWQ3UjwG0SxeQZKhj/v4Q,,,N,0,0,,,2014-04-13 07:21,2014-04-14 17:03,admin,admin,
3112,143209,6971,40038,7842,0,N,N,N,CP_Phys,TT_Task,DT_FixedDrtn,TK_NotStart,CZA-TK-0516-1810,"Cutting, Bevelling & Rolling of Shell No.5",8507,3420,0,10,0,0,0,10,0,0,0,,,,2015-03-28 07:00,2015-03-28 17:00,,2014-02-22 07:00,2014-02-22 17:00,2014-02-22 07:00,2014-02-22 17:00,2014-02-22 07:00,2014-02-22 17:00,2015-03-28 07:00,2015-03-28 17:00,,PT_Normal,,,,,y1P8z0vYBEOqOUsTa9yaxw,Supt8lJvZ0WGbTiZLWC7Cw,,,N,0,0,,,2014-04-13 07:21,2014-04-14 17:03,admin,admin,
3113,143210,6971,40038,7842,0,N,N,N,CP_Phys,TT_Task,DT_FixedDrtn,TK_NotStart,CZA-TK-0516-1820,"Cutting, Bevelling & Rolling of Shell No.6",8507,3420,0,12.5,0,225.47775,225.47775,12.5,0,0,0,,,,2015-03-29 07:00,2015-03-30 09:30,,2014-02-23 07:00,2014-02-24 09:30,2014-02-23 07:00,2014-02-24 09:30,2014-02-23 07:00,2014-02-24 09:30,2015-03-29 07:00,2015-03-30 09:30,,PT_Normal,,,,,5697CSjL10S88VPDS+kkaQ,daltNyNjX0ywQGwwk3R5Sg,,,N,0,0,,,2014-04-13 07:21,2014-04-14 17:03,admin,admin,
3114,143211,6971,40038,7842,0,N,N,N,CP_Phys,TT_Task,DT_FixedDrtn,TK_NotStart,CZA-TK-0516-1830,"Cutting, Bevelling & Rolling of Shell No.7",8507,3420,0,10,0,405.47775,405.47775,10,0,0,0,,,,2015-03-29 07:00,2015-03-29 17:00,,2014-02-23 07:00,2014-02-23 17:00,2014-02-23 07:00,2014-02-23 17:00,2014-02-23 07:00,2014-02-23 17:00,2015-03-29 07:00,2015-03-29 17:00,,PT_Normal,,,,,xzPa63quFUynHht6+gYE0w,dR8ZY7+7eUKEdrCxavVrSQ,,,N,0,0,,,2014-04-13 07:21,2014-04-14 17:03,admin,admin,
3115,143212,6971,40102,7842,0,N,N,N,CP_Phys,TT_Task,DT_FixedDrtn,TK_NotStart,CZA-TK-0516-2530,"Filling, Holding and Draining of Water",8402,596,0,100,0,1356.00739,1356.00739,100,0,0,0,,,,2015-06-01 15:00,2015-06-13 15:00,,2015-03-24 09:00,2015-04-05 09:00,2015-03-24 09:00,2015-04-05 09:00,2015-03-24 09:00,2015-04-05 09:00,2015-06-01 15:00,2015-06-13 15:00,,PT_Normal,,,,,i4mQAwf4YEiypTOsFQkWDw,Eqc6v/aqbECaJ9U0Z08CHQ,,,N,0,0,,,2014-04-13 07:21,2014-04-14 16:04,admin,admin,
3116,143213,6971,40089,7842,0,N,N,N,CP_Phys,TT_Task,DT_FixedDrtn,TK_NotStart,CZA-TK-0516-2540,"Blasting and Painting of Bottom, Shell and Roof (Inside and Outside)",8402,596,0,60,0,813.604434,813.604434,60,0,0,0,,,,2015-06-13 15:00,2015-06-20 15:00,,2015-04-05 09:00,2015-04-12 09:00,2015-04-05 09:00,2015-04-12 09:00,2015-04-05 09:00,2015-04-12 09:00,2015-06-13 15:00,2015-06-20 15:00,,PT_Normal,,,,,pYjHUpdPBUKj6RoSYl1A3Q,bGYjnmwpb065ErxM2zT6aA,,,N,0,0,,,2014-04-13 07:21,2014-04-14 16:04,admin,admin,
3117,143214,6971,40109,7842,0,N,N,N,CP_Phys,TT_Task,DT_FixedDrtn,TK_NotStart,CZA-TK-0516-2550,Tank Calibration,8402,596,0,50,0,271.201478,271.201478,50,0,0,0,,,,2015-06-20 15:00,2015-06-25 15:00,,2015-04-12 09:00,2015-04-18 09:00,2015-04-12 09:00,2015-04-18 09:00,2015-04-12 09:00,2015-04-18 09:00,2015-06-20 15:00,2015-06-25 15:00,,PT_Normal,,,,,3e1u6H932kO73ORVdxlFaw,MWK9rZM0E0SbxEY7r+IZ7A,,,N,0,0,,,2014-04-13 07:21,2014-04-14 16:04,admin,admin,
3118,143215,6971,40109,7842,0,N,N,N,CP_Phys,TT_Task,DT_FixedDrtn,TK_NotStart,CZA-TK-0516-2560,Tank Handover,8402,596,596,20,0,271.201478,271.201478,20,0,0,0,,,,2015-06-25 15:00,2015-06-28 15:00,,2015-04-18 09:00,2015-04-20 09:00,2015-04-18 09:00,2015-04-20 09:00,2015-04-18 09:00,2015-04-20 09:00,2015-06-25 15:00,2015-06-28 15:00,,PT_Normal,,,,,ppPloxqyiUmnqTAfNp4ihw,tO8yy4FUG0Gxb2jGhW0ljA,,,N,0,0,,,2014-04-13 07:21,2014-04-14 16:04,admin,admin,
3119,143216,6971,39942,7842,0,N,N,N,CP_Phys,TT_Mile,DT_FixedDrtn,TK_NotStart,CZA-TK-0516-1900,Foundation Takeover from Client,,0,0,0,0,0,0,0,0,0,0,2014-12-01 00:00,,,2014-11-30 17:00,2014-11-30 17:00,,2014-12-01 07:00,2014-12-01 07:00,2014-12-01 07:00,2014-12-01 07:00,2014-12-01 07:00,2014-12-01 07:00,2014-11-30 17:00,2014-11-30 17:00,CS_MSO,PT_Normal,,,,,L8SU1IefOkudks+W2MDKIA,g54YjvtHbE6YbK+j+G9wyw,,,N,0,0,,,2014-04-13 07:21,2014-04-13 07:42,admin,admin,
3120,143217,6971,40044,7842,0,N,N,N,CP_Phys,TT_Task,DT_FixedDrtn,TK_NotStart,CZA-TK-0515-2150,Cutting of Annular Plate,8499,2922,0,10,0,61.167,61.167,10,0,0,0,,,,2015-01-15 09:00,2015-01-17 09:00,,2014-02-09 07:00,2014-02-09 17:00,2014-02-09 07:00,2014-02-09 17:00,2014-02-09 07:00,2014-02-09 17:00,2015-01-15 09:00,2015-01-17 09:00,,PT_Normal,,,,,JnI8/DCxBkGG1PsD+b+k2w,oH3lxeONv0aerTDn511FWA,,,N,0,0,,,2014-04-13 07:21,2014-04-14 17:03,admin,admin,
3121,143218,6971,40044,7842,0,N,N,N,CP_Phys,TT_Task,DT_FixedDrtn,TK_NotStart,CZA-TK-0515-2160,Cutting of Bottom Plates,8499,3256,0,10,0,152.6625,152.6625,10,0,0,0,,,,2015-02-24 13:00,2015-02-25 13:00,,2014-02-10 07:00,2014-02-10 17:00,2014-02-10 07:00,2014-02-10 17:00,2014-02-10 07:00,2014-02-10 17:00,2015-02-24 13:00,2015-02-25 13:00,,PT_Normal,,,,,APzh4v5Vz0K2yZTLcmDXaA,vfkTv0Jbdkm1Mlfye6YVeQ,,,N,0,0,,,2014-04-13 07:21,2014-04-14 17:03,admin,admin,
3122,143219,6971,40044,7842,0,N,N,N,CP_Phys,TT_Task,DT_FixedDrtn,TK_NotStart,CZA-TK-0515-2170,"Cutting, Bevelling & Rolling of Shell No.1",8499,3256,0,10,0,113.4555,113.4555,10,0,0,0,,,,2015-02-25 13:00,2015-02-26 13:00,,2014-02-11 07:00,2014-02-11 17:00,2014-02-11 07:00,2014-02-11 17:00,2014-02-11 07:00,2014-02-11 17:00,2015-02-25 13:00,2015-02-26 13:00,,PT_Normal,,,,,iiA7ckOV3U6Z/n7cd6J8oA,ltErzAjaYEGxaeCLt1RyEQ,,,N,0,0,,,2014-04-13 07:21,2014-04-14 17:03,admin,admin,
3123,143220,6971,40044,7842,0,N,N,N,CP_Phys,TT_Task,DT_FixedDrtn,TK_NotStart,CZA-TK-0515-2180,"Cutting, Bevelling & Rolling of Shell No.2",8499,3256,0,10,0,225.47775,225.47775,10,0,0,0,,,,2015-02-25 13:00,2015-02-26 13:00,,2014-02-11 07:00,2014-02-11 17:00,2014-02-11 07:00,2014-02-11 17:00,2014-02-11 07:00,2014-02-11 17:00,2015-02-25 13:00,2015-02-26 13:00,,PT_Normal,,,,,cAERRvMm8Uy5zrO/0zSnWw,ir5ZHA4iAE+aGKoDsSH2jw,,,N,0,0,,,2014-04-13 07:21,2014-04-14 17:03,admin,admin,
3124,143221,6971,40044,7842,0,N,N,N,CP_Phys,TT_Task,DT_FixedDrtn,TK_NotStart,CZA-TK-0515-2190,"Cutting, Fit-up and Welding of Shell Nozzles,Manholes and Other Appurtanances",8499,3256,0,50,0,0,0,50,0,0,0,,,,2015-02-25 13:00,2015-03-03 13:00,,2014-02-11 07:00,2014-02-16 17:00,2014-02-11 07:00,2014-02-16 17:00,2014-02-11 07:00,2014-02-16 17:00,2015-02-25 13:00,2015-03-03 13:00,,PT_Normal,,,,,SMOv+C4aSEmoCA/iuiWR9A,h+cGPtQhkkO1ywYr3weJmA,,,N,0,0,,,2014-04-13 07:21,2014-04-14 17:03,admin,admin,
3125,143222,6971,40044,7842,0,N,N,N,CP_Phys,TT_Task,DT_FixedDrtn,TK_NotStart,CZA-TK-0515-2200,Cutting of Floating Deck Plate,8499,3256,0,10,0,385.8,385.8,10,0,0,0,,,,2015-03-03 13:00,2015-03-04 13:00,,2014-02-17 07:00,2014-02-17 17:00,2014-02-17 07:00,2014-02-17 17:00,2014-02-17 07:00,2014-02-17 17:00,2015-03-03 13:00,2015-03-04 13:00,,PT_Normal,,,,,vWDnmCIDHkCFExxU8A/5nQ,eP8iqrdhcEelyUlygLp4JA,,,N,0,0,,,2014-04-13 07:21,2014-04-14 17:03,admin,admin,
3126,143223,6971,40044,7842,0,N,N,N,CP_Phys,TT_Task,DT_FixedDrtn,TK_NotStart,CZA-TK-0515-2210,"Cutting,Fit up and Welding of Pontoon",8499,3256,0,10,0,0,0,10,0,0,0,,,,2015-03-04 13:00,2015-03-05 13:00,,2014-02-18 07:00,2014-02-18 17:00,2014-02-18 07:00,2014-02-18 17:00,2014-02-18 07:00,2014-02-18 17:00,2015-03-04 13:00,2015-03-05 13:00,,PT_Normal,,,,,ueSiuA/ufU+g4fYoM+Zg8Q,hpe9gKUM/UCMK/hPEWGq3g,,,N,0,0,,,2014-04-13 07:21,2014-04-14 17:03,admin,admin,
3127,143224,6971,40044,7842,0,N,N,N,CP_Phys,TT_Task,DT_FixedDrtn,TK_NotStart,CZA-TK-0515-2220,Cutting of Floating Legs and Manholes,8499,3256,0,10,0,0,0,10,0,0,0,,,,2015-03-05 13:00,2015-03-07 13:00,,2014-02-19 07:00,2014-02-19 17:00,2014-02-19 07:00,2014-02-19 17:00,2014-02-19 07:00,2014-02-19 17:00,2015-03-05 13:00,2015-03-07 13:00,,PT_Normal,,,,,ycPiUAk2eECwMrqFKFqK/w,P+AmRxign0e9PqT64US7hg,,,N,0,0,,,2014-04-13 07:21,2014-04-14 17:03,admin,admin,
3128,143225,6971,40044,7842,0,N,N,N,CP_Phys,TT_Task,DT_FixedDrtn,TK_NotStart,CZA-TK-0515-2230,"Cutting, Bevelling & Rolling of Shell No.3",8499,3256,0,10,0,0,0,10,0,0,0,,,,2015-03-07 13:00,2015-03-08 13:00,,2014-02-20 07:00,2014-02-20 17:00,2014-02-20 07:00,2014-02-20 17:00,2014-02-20 07:00,2014-02-20 17:00,2015-03-07 13:00,2015-03-08 13:00,,PT_Normal,,,,,Sx5DGGx7AUqD7aSTTgIm1Q,tLNQ2xlRN0uu0MTNe0PBbg,,,N,0,0,,,2014-04-13 07:21,2014-04-14 17:03,admin,admin,
3129,143226,6971,40044,7842,0,N,N,N,CP_Phys,TT_Task,DT_FixedDrtn,TK_NotStart,CZA-TK-0515-2240,"Cutting, Bevelling & Rolling of Shell No.4",8499,3256,0,10,0,0,0,10,0,0,0,,,,2015-03-07 13:00,2015-03-08 13:00,,2014-02-20 07:00,2014-02-20 17:00,2014-02-20 07:00,2014-02-20 17:00,2014-02-20 07:00,2014-02-20 17:00,2015-03-07 13:00,2015-03-08 13:00,,PT_Normal,,,,,bgPrqtry9EmAOYXh/6YKYQ,dy5KIPjnMU6BOwM4RCWhOw,,,N,0,0,,,2014-04-13 07:21,2014-04-14 17:03,admin,admin,
3130,143227,6971,40044,7842,0,N,N,N,CP_Phys,TT_Task,DT_FixedDrtn,TK_NotStart,CZA-TK-0515-2250,"Cutting, Bevelling & Rolling of Shell No.5",8499,3256,0,10,0,0,0,10,0,0,0,,,,2015-03-08 13:00,2015-03-09 13:00,,2014-02-22 07:00,2014-02-22 17:00,2014-02-22 07:00,2014-02-22 17:00,2014-02-22 07:00,2014-02-22 17:00,2015-03-08 13:00,2015-03-09 13:00,,PT_Normal,,,,,pUXZNph+BUKgadlxAoLVbw,T0vVNfETrEKzF1fqywi2Vg,,,N,0,0,,,2014-04-13 07:21,2014-04-14 17:03,admin,admin,
3131,143228,6971,40044,7842,0,N,N,N,CP_Phys,TT_Task,DT_FixedDrtn,TK_NotStart,CZA-TK-0515-2260,"Cutting, Bevelling & Rolling of Shell No.6",8499,3256,0,12.5,0,225.47775,225.47775,12.5,0,0,0,,,,2015-03-09 13:00,2015-03-10 15:30,,2014-02-23 07:00,2014-02-24 09:30,2014-02-23 07:00,2014-02-24 09:30,2014-02-23 07:00,2014-02-24 09:30,2015-03-09 13:00,2015-03-10 15:30,,PT_Normal,,,,,Ar06cFBLIEiuG+iLetfHjA,vQWJ5ZOEUUym16VFAc7Ckw,,,N,0,0,,,2014-04-13 07:21,2014-04-14 17:03,admin,admin,
3132,143229,6971,40044,7842,0,N,N,N,CP_Phys,TT_Task,DT_FixedDrtn,TK_NotStart,CZA-TK-0515-2270,"Cutting, Bevelling & Rolling of Shell No.7",8499,3256,0,10,0,40.8525,40.8525,10,0,0,0,,,,2015-03-09 13:00,2015-03-10 13:00,,2014-02-23 07:00,2014-02-23 17:00,2014-02-23 07:00,2014-02-23 17:00,2014-02-23 07:00,2014-02-23 17:00,2015-03-09 13:00,2015-03-10 13:00,,PT_Normal,,,,,hmQV9kd9qUurETHaDfupKA,zL+VrNfEqkmK31jThv0lig,,,N,0,0,,,2014-04-13 07:21,2014-04-14 17:03,admin,admin,
3133,143230,6971,40044,7842,0,N,N,N,CP_Phys,TT_Task,DT_FixedDrtn,TK_NotStart,CZA-TK-0515-2280,"Cutting, Bevelling & Rolling of Curb Angle",8499,3256,0,20,0,7.4385,7.4385,20,0,0,0,,,,2015-03-11 09:00,2015-03-14 09:00,,2014-02-24 13:00,2014-02-26 13:00,2014-02-24 13:00,2014-02-26 13:00,2014-02-24 13:00,2014-02-26 13:00,2015-03-11 09:00,2015-03-14 09:00,,PT_Normal,,,,,c7510x14HkqBtNx+5lbH+g,OlBHUymI0EeSTMCp4QTfhQ,,,N,0,0,,,2014-04-13 07:21,2014-04-14 17:03,admin,admin,
3134,143231,6971,40044,7842,0,N,N,N,CP_Phys,TT_Task,DT_FixedDrtn,TK_NotStart,CZA-TK-0515-2290,"Cutting, Fit-up and Welding of Roof Structure",8499,3256,0,40,0,123.99,123.99,40,0,0,0,,,,2015-03-14 13:00,2015-03-18 13:00,,2014-02-27 07:00,2014-03-03 17:00,2014-02-27 07:00,2014-03-03 17:00,2014-02-27 07:00,2014-03-03 17:00,2015-03-14 13:00,2015-03-18 13:00,,PT_Normal,,,,,Fx8iVxPh3E2f+pVd4myOCg,qX214z0hxkuAw5ndOc23yA,,,N,0,0,,,2014-04-13 07:21,2014-04-14 17:03,admin,admin,
3135,143232,6971,40044,7842,0,N,N,N,CP_Phys,TT_Task,DT_FixedDrtn,TK_NotStart,CZA-TK-0515-2510,Cutting of Roof Plates,8499,3256,0,10,0,0,0,10,0,0,0,,,,2015-03-18 13:00,2015-03-19 13:00,,2014-03-04 07:00,2014-03-04 17:00,2014-03-04 07:00,2014-03-04 17:00,2014-03-04 07:00,2014-03-04 17:00,2015-03-18 13:00,2015-03-19 13:00,,PT_Normal,,,,,89Lbxwtnu0aZ+qzszRUq8A,htVCiDApAUShiuMtgaIvKw,,,N,0,0,,,2014-04-13 07:21,2014-04-14 17:03,admin,admin,
3136,143233,6971,40044,7842,0,N,N,N,CP_Phys,TT_Task,DT_FixedDrtn,TK_NotStart,CZA-TK-0515-2520,"Cutting, Fit-up and Welding of Roof Nozzles, Manholes and Other Appurtanances",8499,3256,0,50,0,0,0,50,0,0,0,,,,2015-03-19 13:00,2015-03-25 13:00,,2014-03-05 07:00,2014-03-10 17:00,2014-03-05 07:00,2014-03-10 17:00,2014-03-05 07:00,2014-03-10 17:00,2015-03-19 13:00,2015-03-25 13:00,,PT_Normal,,,,,Nz5kxCB3kUOChoewrm5/BA,/vKi88ocREe0JufkSrMyJw,,,N,0,0,,,2014-04-13 07:21,2014-04-14 17:03,admin,admin,
3137,143234,6971,40044,7842,0,N,N,N,CP_Phys,TT_Task,DT_FixedDrtn,TK_NotStart,CZA-TK-0515-2530,"Cutting, Fit-up and Welding of Roof Platform,Gratings and Stairway",8499,3256,0,70,0,0,0,70,0,0,0,,,,2015-03-23 07:00,2015-03-30 17:00,,2014-03-08 11:00,2014-03-16 11:00,2014-03-08 11:00,2014-03-16 11:00,2014-03-08 11:00,2014-03-16 11:00,2015-03-23 07:00,2015-03-30 17:00,,PT_Normal,,,,,8SvejH6tEEewXawBZAO2OA,YOwNB9ruyEesbchM+zY1XQ,,,N,0,0,,,2014-04-13 07:21,2014-04-14 17:03,admin,admin,
3138,143235,6971,40044,7842,0,N,N,N,CP_Phys,TT_Task,DT_FixedDrtn,TK_NotStart,CZA-TK-0515-2540,"Cutting, Fit-up and Welding of Stairway Platform, Gratings and Handrails",8499,3256,696,70,0,0,0,70,0,0,0,,,,2015-03-23 15:00,2015-03-31 15:00,,2014-03-09 09:00,2014-03-17 09:00,2014-03-09 09:00,2014-03-17 09:00,2014-03-09 09:00,2014-03-17 09:00,2015-03-23 15:00,2015-03-31 15:00,,PT_Normal,,,,,A/gcvlL3E0eC0EJh0kRUOg,tf0hY+JZy0uYNv1tsKi2Bg,,,N,0,0,,,2014-04-13 07:21,2014-04-14 17:03,admin,admin,
3139,143236,6971,40573,7842,0,N,N,N,CP_Phys,TT_Task,DT_FixedDrtn,TK_NotStart,CZA-TK-0515-2310,Laying and Fit-up,8394,2560,0,10,0,26.77737,26.77737,10,20,0,20,,,,2015-01-18 13:00,2015-01-19 13:00,,2014-03-25 13:00,2014-03-26 13:00,2014-03-25 13:00,2014-03-26 13:00,2014-03-25 13:00,2014-03-26 13:00,2015-01-18 13:00,2015-01-19 13:00,,PT_Normal,,,,,ybRxHvRdnEi2JntJ9W2TGA,RYMZKCUsO0mTNNZpY3Lc1g,,,N,0,0,,,2014-04-13 07:21,2014-04-14 16:04,admin,admin,
3140,143237,6971,40573,7842,0,N,N,N,CP_Phys,TT_Task,DT_FixedDrtn,TK_NotStart,CZA-TK-0515-2320,Welding,8394,2560,0,30,0,33.471713,33.471713,30,60,0,60,,,,2015-01-19 13:00,2015-01-22 13:00,,2014-03-26 13:00,2014-03-30 13:00,2014-03-26 13:00,2014-03-30 13:00,2014-03-26 13:00,2014-03-30 13:00,2015-01-19 13:00,2015-01-22 13:00,,PT_Normal,,,,,hSrphg2VPEWP8TYVQ0jdqg,OW8UwSZkuEq/M/mOiCktRA,,,N,0,0,,,2014-04-13 07:21,2014-04-14 16:04,admin,admin,
3141,143238,6971,40573,7842,0,N,N,N,CP_Phys,TT_Task,DT_FixedDrtn,TK_NotStart,CZA-TK-0515-2330,Inspection,8394,2560,0,40,0,6.694343,6.694343,40,0,0,0,,,,2015-01-18 13:00,2015-01-22 13:00,,2014-03-25 13:00,2014-03-30 13:00,2014-03-25 13:00,2014-03-30 13:00,2014-03-25 13:00,2014-03-30 13:00,2015-01-18 13:00,2015-01-22 13:00,,PT_Normal,,,,,Y01eRaViC0etJ4YfrXnVPg,Sn/Dxn+f5USJ5d4CUcrO4g,,,N,0,0,,,2014-04-13 07:21,2014-04-14 16:04,admin,admin,
3142,143239,6971,40574,7842,0,N,N,N,CP_Phys,TT_Task,DT_FixedDrtn,TK_NotStart,CZA-TK-0515-2340,Erection and Fit-up,8394,2560,0,10,0,66.831793,66.831793,10,20,0,20,,,,2015-01-22 13:00,2015-01-24 13:00,,2014-03-30 13:00,2014-03-31 13:00,2014-03-30 13:00,2014-03-31 13:00,2014-03-30 13:00,2014-03-31 13:00,2015-01-22 13:00,2015-01-24 13:00,,PT_Normal,,,,,Wk7Q/T5ywU6Zkz5LjjA4cA,COk3EuEcN0CbWq+0dQudfQ,,,N,0,0,,,2014-04-13 07:21,2014-04-14 16:04,admin,admin,
3143,143240,6971,40574,7842,0,N,N,N,CP_Phys,TT_Task,DT_FixedDrtn,TK_NotStart,CZA-TK-0515-2350,Welding,8394,2560,0,30,0,83.539741,83.539741,30,60,0,60,,,,2015-01-24 13:00,2015-01-27 13:00,,2014-03-31 13:00,2014-04-03 13:00,2014-03-31 13:00,2014-04-03 13:00,2014-03-31 13:00,2014-04-03 13:00,2015-01-24 13:00,2015-01-27 13:00,,PT_Normal,,,,,BOJghRs4cUapPfQ9/3A2mQ,E8xc0IIsykeVyab0AfjHYA,,,N,0,0,,,2014-04-13 07:21,2014-04-14 16:04,admin,admin,
3144,143241,6971,40574,7842,0,N,N,N,CP_Phys,TT_Task,DT_FixedDrtn,TK_NotStart,CZA-TK-0515-2360,Inspection,8394,2560,0,40,0,16.707948,16.707948,40,0,0,0,,,,2015-01-22 13:00,2015-01-27 13:00,,2014-03-30 13:00,2014-04-03 13:00,2014-03-30 13:00,2014-04-03 13:00,2014-03-30 13:00,2014-04-03 13:00,2015-01-22 13:00,2015-01-27 13:00,,PT_Normal,,,,,+f4Tw66wIkOSr9Av8gT7xg,g4mWIEkh0EKpFdwEz3tZRA,,,N,0,0,,,2014-04-13 07:21,2014-04-14 16:04,admin,admin,
3145,143242,6971,40575,7842,0,N,N,N,CP_Phys,TT_Task,DT_FixedDrtn,TK_NotStart,CZA-TK-0515-2370,Erection and Fit-up,8394,2560,0,10,0,49.667957,49.667957,10,0,0,0,,,,2015-01-27 13:00,2015-01-28 13:00,,2014-04-03 13:00,2014-04-05 13:00,2014-04-03 13:00,2014-04-05 13:00,2014-04-03 13:00,2014-04-05 13:00,2015-01-27 13:00,2015-01-28 13:00,,PT_Normal,,,,,1S7fkysMOkWUDZnBFRL9zw,Dq/FPW0890aTZrmY9YaBuw,,,N,0,0,,,2014-04-13 07:21,2014-04-14 16:04,admin,admin,
3146,143243,6971,40575,7842,0,N,N,N,CP_Phys,TT_Task,DT_FixedDrtn,TK_NotStart,CZA-TK-0515-2380,Welding,8394,2560,0,30,0,62.084946,62.084946,30,60,0,60,,,,2015-01-28 13:00,2015-02-01 13:00,,2014-04-05 13:00,2014-04-08 13:00,2014-04-05 13:00,2014-04-08 13:00,2014-04-05 13:00,2014-04-08 13:00,2015-01-28 13:00,2015-02-01 13:00,,PT_Normal,,,,,jHajxBdOC0i7IE7yua6cJw,Efcg+HkgC0iDCLKc0xHX3Q,,,N,0,0,,,2014-04-13 07:21,2014-04-14 16:04,admin,admin,
3147,143244,6971,40575,7842,0,N,N,N,CP_Phys,TT_Task,DT_FixedDrtn,TK_NotStart,CZA-TK-0515-2390,Inspection,8394,2560,0,40,0,12.416989,12.416989,40,0,0,0,,,,2015-01-27 13:00,2015-02-01 13:00,,2014-04-03 13:00,2014-04-08 13:00,2014-04-03 13:00,2014-04-08 13:00,2014-04-03 13:00,2014-04-08 13:00,2015-01-27 13:00,2015-02-01 13:00,,PT_Normal,,,,,ZR/eIyJTREacLLr5Fa4AuA,GSkSMDDD+0uDlAmSBIHQzQ,,,N,0,0,,,2014-04-13 07:21,2014-04-14 16:04,admin,admin,
3148,143245,6971,40576,7842,0,N,N,N,CP_Phys,TT_Task,DT_FixedDrtn,TK_NotStart,CZA-TK-0515-2400,Erection and Fit-up,8394,2560,0,10,0,98.708473,98.708473,10,0,0,0,,,,2015-02-01 13:00,2015-02-02 13:00,,2014-04-08 13:00,2014-04-09 13:00,2014-04-08 13:00,2014-04-09 13:00,2014-04-08 13:00,2014-04-09 13:00,2015-02-01 13:00,2015-02-02 13:00,,PT_Normal,,,,,emk/fkLyDEK82jzIHwLdhA,tb5oay06OEaxuuE6qMc13Q,,,N,0,0,,,2014-04-13 07:21,2014-04-14 16:04,admin,admin,
3149,143246,6971,40576,7842,0,N,N,N,CP_Phys,TT_Task,DT_FixedDrtn,TK_NotStart,CZA-TK-0515-2410,Welding,8394,2560,0,30,0,123.385591,123.385591,30,60,0,60,,,,2015-02-02 13:00,2015-02-05 13:00,,2014-04-09 13:00,2014-04-13 13:00,2014-04-09 13:00,2014-04-13 13:00,2014-04-09 13:00,2014-04-13 13:00,2015-02-02 13:00,2015-02-05 13:00,,PT_Normal,,,,,dHWUR/vF/kqRFrPTFqKhSw,VlQG395n4E2ubx5wnrmmaQ,,,N,0,0,,,2014-04-13 07:21,2014-04-14 16:04,admin,admin,
3150,143247,6971,40576,7842,0,N,N,N,CP_Phys,TT_Task,DT_FixedDrtn,TK_NotStart,CZA-TK-0515-2420,Inspection,8394,2560,0,40,0,24.677118,24.677118,40,0,0,0,,,,2015-02-01 13:00,2015-02-05 13:00,,2014-04-08 13:00,2014-04-13 13:00,2014-04-08 13:00,2014-04-13 13:00,2014-04-08 13:00,2014-04-13 13:00,2015-02-01 13:00,2015-02-05 13:00,,PT_Normal,,,,,eqatxC33OUmjXAQ1B0m/Lw,HXQxP7fukEGmM+iQ0dmTOQ,,,N,0,0,,,2014-04-13 07:21,2014-04-14 16:04,admin,admin,
3151,143248,6971,40577,7842,0,N,N,N,CP_Phys,TT_Task,DT_FixedDrtn,TK_NotStart,CZA-TK-0515-2430,"Cutting, Installation and Fit-up",8394,2560,0,20,0,0,0,20,40,0,40,,,,2015-02-05 13:00,2015-02-08 13:00,,2014-04-13 13:00,2014-04-15 13:00,2014-04-13 13:00,2014-04-15 13:00,2014-04-13 13:00,2014-04-15 13:00,2015-02-05 13:00,2015-02-08 13:00,,PT_Normal,,,,,NuzAIQaFwE+B1W8uABOHmQ,5OeVZ+6beEibOEpg48l2jA,,,N,0,0,,,2014-04-13 07:21,2014-04-14 16:04,admin,admin,
3152,143249,6971,40577,7842,0,N,N,N,CP_Phys,TT_Task,DT_FixedDrtn,TK_NotStart,CZA-TK-0515-2440,Welding,8394,2561.333333,1.333333,38.666667,0,0,0,38.666667,0,0,0,,,,2015-02-08 14:20,2015-02-12 13:00,,2014-04-15 13:00,2014-04-20 11:40,2014-04-15 13:00,2014-04-20 11:40,2014-04-15 13:00,2014-04-20 11:40,2015-02-08 14:20,2015-02-12 13:00,,PT_Normal,,,,,zvJWh0gJN0KfUZRjO+z6xg,XqWUco+zt028RpNd8LRPSQ,,,N,0,0,,,2014-04-13 07:21,2014-04-15 07:43,admin,admin,
3153,143250,6971,40577,7842,0,N,N,N,CP_Phys,TT_Task,DT_FixedDrtn,TK_NotStart,CZA-TK-0515-2450,Inspection,8394,2560,0,60,0,0,0,60,0,0,0,,,,2015-02-05 13:00,2015-02-12 13:00,,2014-04-13 13:00,2014-04-20 13:00,2014-04-13 13:00,2014-04-20 13:00,2014-04-13 13:00,2014-04-20 13:00,2015-02-05 13:00,2015-02-12 13:00,,PT_Normal,,,,,g7fr//dkSEGqOeMo4avJfA,UXz2TcutpECSwg3SNLNOXA,,,N,0,0,,,2014-04-13 07:21,2014-04-14 16:04,admin,admin,
3154,143251,6971,40578,7842,0,N,N,N,CP_Phys,TT_Task,DT_FixedDrtn,TK_NotStart,CZA-TK-0515-2460,Laying & Fit-up,8394,2560,0,18.833333,0,168.893511,168.893511,18.833333,0,0,0,,,,2015-02-05 13:00,2015-02-08 11:50,,2014-04-13 13:00,2014-04-15 11:50,2014-04-13 13:00,2014-04-15 11:50,2014-04-13 13:00,2014-04-15 11:50,2015-02-05 13:00,2015-02-08 11:50,,PT_Normal,,,,,frbB/y4e5kehSsZfzYk2/g,ngopL70zkUOvhECHPk5dDw,,,N,0,0,,,2014-04-13 07:21,2014-04-15 07:43,admin,admin,
3155,143252,6971,40578,7842,0,N,N,N,CP_Phys,TT_Task,DT_FixedDrtn,TK_NotStart,CZA-TK-0515-2470,Welding,8394,2560,0,61.166667,0,211.116889,211.116889,61.166667,122.333333,0,122.333333,,,,2015-02-08 11:50,2015-02-15 13:00,,2014-04-15 11:50,2014-04-22 13:00,2014-04-15 11:50,2014-04-22 13:00,2014-04-15 11:50,2014-04-22 13:00,2015-02-08 11:50,2015-02-15 13:00,,PT_Normal,,,,,HKWI2o7eT0W01bt2KEC68A,GSnzskzOQUOf1FOb0v31pA,,,N,0,0,,,2014-04-13 07:21,2014-04-15 07:43,admin,admin,
3156,143253,6971,40578,7842,0,N,N,N,CP_Phys,TT_Task,DT_FixedDrtn,TK_NotStart,CZA-TK-0515-2480,Inspection,8394,2560,0,80,0,42.223378,42.223378,80,0,0,0,,,,2015-02-05 13:00,2015-02-15 13:00,,2014-04-13 13:00,2014-04-22 13:00,2014-04-13 13:00,2014-04-22 13:00,2014-04-13 13:00,2014-04-22 13:00,2015-02-05 13:00,2015-02-15 13:00,,PT_Normal,,,,,+8X1uqr0nkOo0RWOePWSNw,MBMSmiWGlEyjpu7u26dJyg,,,N,0,0,,,2014-04-13 07:21,2014-04-14 16:04,admin,admin,
3157,143254,6971,40370,7842,0,N,N,N,CP_Phys,TT_Task,DT_FixedDrtn,TK_NotStart,CZA-TK-0515-2490,"Cutting of All Holes, Laying and Fit-up",8394,2560,0,20,0,0,0,20,40,0,40,,,,2015-02-15 13:00,2015-02-17 13:00,,2014-04-22 13:00,2014-04-24 13:00,2014-04-22 13:00,2014-04-24 13:00,2014-04-22 13:00,2014-04-24 13:00,2015-02-15 13:00,2015-02-17 13:00,,PT_Normal,,,,,uyosSqkU6U+FMFdsvtouAQ,IPUB30PqHEW2jZjkK6xM/Q,,,N,0,0,,,2014-04-13 07:21,2014-04-14 16:04,admin,admin,
3158,143255,6971,40370,7842,0,N,N,N,CP_Phys,TT_Task,DT_FixedDrtn,TK_NotStart,CZA-TK-0515-2500,Welding of Sleeves and Plates,8394,2560,0,60,0,0,0,60,120,0,120,,,,2015-02-17 13:00,2015-02-24 13:00,,2014-04-24 13:00,2014-05-01 13:00,2014-04-24 13:00,2014-05-01 13:00,2014-04-24 13:00,2014-05-01 13:00,2015-02-17 13:00,2015-02-24 13:00,,PT_Normal,,,,,l8PJ5WjYLkOU6AqteOhoZQ,EEme1NlXmES0k4IieICFdw,,,N,0,0,,,2014-04-13 07:21,2014-04-14 16:04,admin,admin,
3159,143256,6971,40370,7842,0,N,N,N,CP_Phys,TT_Task,DT_FixedDrtn,TK_NotStart,CZA-TK-0515-2560,Installation of Leg Support,8394,2560,0,20,0,0,0,20,40,0,40,,,,2015-02-24 13:00,2015-02-26 13:00,,2014-05-01 13:00,2014-05-04 13:00,2014-05-01 13:00,2014-05-04 13:00,2014-05-01 13:00,2014-05-04 13:00,2015-02-24 13:00,2015-02-26 13:00,,PT_Normal,,,,,nhQ8wixJg02gqN9tiLQKZQ,i4xVDNBA7EC9DwNfZK0EtA,,,N,0,0,,,2014-04-13 07:21,2014-04-14 16:04,admin,admin,
3160,143257,6971,40370,7842,0,N,N,N,CP_Phys,TT_Task,DT_FixedDrtn,TK_NotStart,CZA-TK-0515-2570,Inspection,8394,2560,0,100,0,0,0,100,0,0,0,,,,2015-02-15 13:00,2015-02-26 13:00,,2014-04-22 13:00,2014-05-04 13:00,2014-04-22 13:00,2014-05-04 13:00,2014-04-22 13:00,2014-05-04 13:00,2015-02-15 13:00,2015-02-26 13:00,,PT_Normal,,,,,rfAaLyi8o06PDhFWHrorkw,YWZcM1w6vUSqIqMVSvlvkw,,,N,0,0,,,2014-04-13 07:21,2014-04-14 16:04,admin,admin,
3161,143258,6971,40371,7842,0,N,N,N,CP_Phys,TT_Task,DT_FixedDrtn,TK_NotStart,CZA-TK-0515-2580,Erection and Fit-up,8394,2560,0,10,0,0,0,10,0,0,0,,,,2015-02-08 09:00,2015-02-09 09:00,,2014-04-15 09:00,2014-04-16 09:00,2014-04-15 09:00,2014-04-16 09:00,2014-04-15 09:00,2014-04-16 09:00,2015-02-08 09:00,2015-02-09 09:00,,PT_Normal,,,,,FEo7y94OukiuTvBDiXvyoQ,EYsv2gPlC0qMS8LsKD3RaA,,,N,0,0,,,2014-04-13 07:21,2014-04-14 16:04,admin,admin,
3162,143259,6971,40371,7842,0,N,N,N,CP_Phys,TT_Task,DT_FixedDrtn,TK_NotStart,CZA-TK-0515-2590,Welding,8394,2560,0,30,0,0,0,30,60,0,60,,,,2015-02-09 09:00,2015-02-12 09:00,,2014-04-16 09:00,2014-04-20 09:00,2014-04-16 09:00,2014-04-20 09:00,2014-04-16 09:00,2014-04-20 09:00,2015-02-09 09:00,2015-02-12 09:00,,PT_Normal,,,,,0bTRmJT2yEu8HSdS1qa4dA,dGm6KhpzYUy6l4LHkTdRGg,,,N,0,0,,,2014-04-13 07:21,2014-04-14 16:04,admin,admin,
3163,143260,6971,40371,7842,0,N,N,N,CP_Phys,TT_Task,DT_FixedDrtn,TK_NotStart,CZA-TK-0515-2600,Inspection,8394,2560,0,40,0,0,0,40,0,0,0,,,,2015-02-08 09:00,2015-02-12 09:00,,2014-04-15 09:00,2014-04-20 09:00,2014-04-15 09:00,2014-04-20 09:00,2014-04-15 09:00,2014-04-20 09:00,2015-02-08 09:00,2015-02-12 09:00,,PT_Normal,,,,,VcMKC0Udv0ijJjOis2ssWQ,A1QXX6u6q0GfMLuXSi5yQA,,,N,0,0,,,2014-04-13 07:21,2014-04-14 16:04,admin,admin,
3164,143261,6971,40372,7842,0,N,N,N,CP_Phys,TT_Task,DT_FixedDrtn,TK_NotStart,CZA-TK-0515-2610,Erection and Fit-up,8394,2560,0,10,0,0,0,10,20,0,20,,,,2015-02-12 09:00,2015-02-14 09:00,,2014-04-20 09:00,2014-04-21 09:00,2014-04-20 09:00,2014-04-21 09:00,2014-04-20 09:00,2014-04-21 09:00,2015-02-12 09:00,2015-02-14 09:00,,PT_Normal,,,,,ih67UtpnL0+4eN5pAYtBfA,RTdGz4xv8UqyxVf7uV5yKQ,,,N,0,0,,,2014-04-13 07:21,2014-04-14 16:04,admin,admin,
3165,143262,6971,40372,7842,0,N,N,N,CP_Phys,TT_Task,DT_FixedDrtn,TK_NotStart,CZA-TK-0515-2620,Welding,8394,2560,0,30,0,0,0,30,0,0,0,,,,2015-02-14 09:00,2015-02-17 09:00,,2014-04-21 09:00,2014-04-24 09:00,2014-04-21 09:00,2014-04-24 09:00,2014-04-21 09:00,2014-04-24 09:00,2015-02-14 09:00,2015-02-17 09:00,,PT_Normal,,,,,QGEaCyQMjUKqAJo0nVRgAw,5iM7eCx4qU6xHVGE6gJ72g,,,N,0,0,,,2014-04-13 07:21,2014-04-14 16:04,admin,admin,
3166,143263,6971,40372,7842,0,N,N,N,CP_Phys,TT_Task,DT_FixedDrtn,TK_NotStart,CZA-TK-0515-2630,Inspection,8394,2560,0,40,0,0,0,40,0,0,0,,,,2015-02-12 09:00,2015-02-17 09:00,,2014-04-20 09:00,2014-04-24 09:00,2014-04-20 09:00,2014-04-24 09:00,2014-04-20 09:00,2014-04-24 09:00,2015-02-12 09:00,2015-02-17 09:00,,PT_Normal,,,,,uHyOo/zn3E+1mZQZwWbt2w,uqyfuENq30OD+qipSQdZAA,,,N,0,0,,,2014-04-13 07:21,2014-04-14 16:04,admin,admin,
3167,143264,6971,40373,7842,0,N,N,N,CP_Phys,TT_Task,DT_FixedDrtn,TK_NotStart,CZA-TK-0515-2640,Erection and Fit-up,8394,2560,0,10,0,0,0,10,0,0,0,,,,2015-02-17 09:00,2015-02-18 09:00,,2014-04-24 09:00,2014-04-26 09:00,2014-04-24 09:00,2014-04-26 09:00,2014-04-24 09:00,2014-04-26 09:00,2015-02-17 09:00,2015-02-18 09:00,,PT_Normal,,,,,k3WkhJqKXUGBtIIhz/Br/A,BBX0fRbrv0mDfi2YPA+B9Q,,,N,0,0,,,2014-04-13 07:21,2014-04-14 16:04,admin,admin,
3168,143265,6971,40373,7842,0,N,N,N,CP_Phys,TT_Task,DT_FixedDrtn,TK_NotStart,CZA-TK-0515-2650,Welding,8394,2560,0,30,0,0,0,30,60,0,60,,,,2015-02-18 09:00,2015-02-22 09:00,,2014-04-26 09:00,2014-04-29 09:00,2014-04-26 09:00,2014-04-29 09:00,2014-04-26 09:00,2014-04-29 09:00,2015-02-18 09:00,2015-02-22 09:00,,PT_Normal,,,,,rTilxjp7qUeHOiWckAKDxA,JdE1JWOFFUGOC1yWL87ecg,,,N,0,0,,,2014-04-13 07:21,2014-04-14 16:04,admin,admin,
3169,143266,6971,40373,7842,0,N,N,N,CP_Phys,TT_Task,DT_FixedDrtn,TK_NotStart,CZA-TK-0515-2660,Inspection,8394,2560,0,40,0,0,0,40,0,0,0,,,,2015-02-17 09:00,2015-02-22 09:00,,2014-04-24 09:00,2014-04-29 09:00,2014-04-24 09:00,2014-04-29 09:00,2014-04-24 09:00,2014-04-29 09:00,2015-02-17 09:00,2015-02-22 09:00,,PT_Normal,,,,,zLeK9e1KQEy7yz81wIRhbg,V8dRqvcZkkivDyRlzDabZg,,,N,0,0,,,2014-04-13 07:21,2014-04-14 16:04,admin,admin,
3170,143267,6971,40374,7842,0,N,N,N,CP_Phys,TT_Task,DT_FixedDrtn,TK_NotStart,CZA-TK-0515-2670,Erection and Fit-up,8394,2560,0,10,0,98.708473,98.708473,10,0,0,0,,,,2015-02-22 09:00,2015-02-23 09:00,,2014-04-29 09:00,2014-04-30 09:00,2014-04-29 09:00,2014-04-30 09:00,2014-04-29 09:00,2014-04-30 09:00,2015-02-22 09:00,2015-02-23 09:00,,PT_Normal,,,,,4dP6192oD0OCuQa4MqZjFQ,cx4ZUJFDRE6Z55+r7s5pTw,,,N,0,0,,,2014-04-13 07:21,2014-04-14 16:04,admin,admin,
3171,143268,6971,40374,7842,0,N,N,N,CP_Phys,TT_Task,DT_FixedDrtn,TK_NotStart,CZA-TK-0515-2680,Welding,8394,2560,0,30,0,123.385591,123.385591,30,60,0,60,,,,2015-02-23 09:00,2015-02-26 09:00,,2014-04-30 09:00,2014-05-04 09:00,2014-04-30 09:00,2014-05-04 09:00,2014-04-30 09:00,2014-05-04 09:00,2015-02-23 09:00,2015-02-26 09:00,,PT_Normal,,,,,SVmd6+O/G0W/PThv7H3i0Q,YlbWT2t0w0qCcvoyBq2KtA,,,N,0,0,,,2014-04-13 07:21,2014-04-14 16:04,admin,admin,
3172,143269,6971,40374,7842,0,N,N,N,CP_Phys,TT_Task,DT_FixedDrtn,TK_NotStart,CZA-TK-0515-2690,Inspection,8394,2560,0,40,0,24.677118,24.677118,40,0,0,0,,,,2015-02-22 09:00,2015-02-26 09:00,,2014-04-29 09:00,2014-05-04 09:00,2014-04-29 09:00,2014-05-04 09:00,2014-04-29 09:00,2014-05-04 09:00,2015-02-22 09:00,2015-02-26 09:00,,PT_Normal,,,,,lY5HNaAdHE6AgPuupFtwJA,5LpkKzTzLkWZH5P8KZuirQ,,,N,0,0,,,2014-04-13 07:21,2014-04-14 16:04,admin,admin,
3173,143270,6971,40484,7842,0,N,N,N,CP_Phys,TT_Task,DT_FixedDrtn,TK_NotStart,CZA-TK-0515-2700,Erection and Fit-up,8394,2560,0,10,0,17.884194,17.884194,10,0,0,0,,,,2015-02-26 09:00,2015-02-28 09:00,,2014-05-04 09:00,2014-05-05 09:00,2014-05-04 09:00,2014-05-05 09:00,2014-05-04 09:00,2014-05-05 09:00,2015-02-26 09:00,2015-02-28 09:00,,PT_Normal,,,,,aEPOL23UGE+yUjvxkm8VSQ,RX6467iub0+aYrwlRvhgGQ,,,N,0,0,,,2014-04-13 07:21,2014-04-14 16:04,admin,admin,
3174,143271,6971,40484,7842,0,N,N,N,CP_Phys,TT_Task,DT_FixedDrtn,TK_NotStart,CZA-TK-0515-2710,Welding,8394,2560,0,30,0,22.355243,22.355243,30,60,0,60,,,,2015-02-28 09:00,2015-03-03 09:00,,2014-05-05 09:00,2014-05-08 09:00,2014-05-05 09:00,2014-05-08 09:00,2014-05-05 09:00,2014-05-08 09:00,2015-02-28 09:00,2015-03-03 09:00,,PT_Normal,,,,,c+qQnB9fpEK5pHJLRv9lIQ,3mtXhwVEkkapChRDkTl9GA,,,N,0,0,,,2014-04-13 07:21,2014-04-14 16:04,admin,admin,
3175,143272,6971,40484,7842,0,N,N,N,CP_Phys,TT_Task,DT_FixedDrtn,TK_NotStart,CZA-TK-0515-2720,Inspection,8394,2560,0,40,0,4.471049,4.471049,40,0,0,0,,,,2015-02-26 09:00,2015-03-03 09:00,,2014-05-04 09:00,2014-05-08 09:00,2014-05-04 09:00,2014-05-08 09:00,2014-05-04 09:00,2014-05-08 09:00,2015-02-26 09:00,2015-03-03 09:00,,PT_Normal,,,,,F0RlUGnjYUG63f0XthVV2g,MJXFS3m160ONmmEuEIauMw,,,N,0,0,,,2014-04-13 07:21,2014-04-14 16:04,admin,admin,
3176,143273,6971,40376,7842,0,N,N,N,CP_Phys,TT_Task,DT_FixedDrtn,TK_NotStart,CZA-TK-0515-2730,"Cutting, Installation and Fit-up",8394,2560,0,20,0,0,0,20,40,0,40,,,,2015-03-03 09:00,2015-03-05 09:00,,2014-05-08 09:00,2014-05-11 09:00,2014-05-08 09:00,2014-05-11 09:00,2014-05-08 09:00,2014-05-11 09:00,2015-03-03 09:00,2015-03-05 09:00,,PT_Normal,,,,,fiegjU5Zf0CpGR2L5BnOFw,LDQGlIztmkSDY8ts3nHjuQ,,,N,0,0,,,2014-04-13 07:21,2014-04-14 16:04,admin,admin,
3177,143274,6971,40376,7842,0,N,N,N,CP_Phys,TT_Task,DT_FixedDrtn,TK_NotStart,CZA-TK-0515-2740,Welding,8394,2560,0,50,0,0,0,50,100,0,100,,,,2015-03-05 09:00,2015-03-11 09:00,,2014-05-11 09:00,2014-05-17 09:00,2014-05-11 09:00,2014-05-17 09:00,2014-05-11 09:00,2014-05-17 09:00,2015-03-05 09:00,2015-03-11 09:00,,PT_Normal,,,,,AdUmUfTSiEKHxpz+t3mn1w,q24MRpcV3UCo2oU+GnnXrg,,,N,0,0,,,2014-04-13 07:21,2014-04-14 16:04,admin,admin,
3178,143275,6971,40376,7842,0,N,N,N,CP_Phys,TT_Task,DT_FixedDrtn,TK_NotStart,CZA-TK-0515-2750,Inspection,8394,2560,0,70,0,0,0,70,0,0,0,,,,2015-03-03 09:00,2015-03-11 09:00,,2014-05-08 09:00,2014-05-17 09:00,2014-05-08 09:00,2014-05-17 09:00,2014-05-08 09:00,2014-05-17 09:00,2015-03-03 09:00,2015-03-11 09:00,,PT_Normal,,,,,uRAFLSSPTEuYKAgk/Vp/XA,B3ARcOVe+0mMBJ/RM/h72A,,,N,0,0,,,2014-04-13 07:21,2014-04-14 16:04,admin,admin,
3179,143276,6971,40377,7842,0,N,N,N,CP_Phys,TT_Task,DT_FixedDrtn,TK_NotStart,CZA-TK-0515-2970,Insulation Works,8394,2560,0,200,0,0,0,200,0,0,0,,,,2015-04-21 15:00,2015-05-14 15:00,,2014-06-26 15:00,2014-07-20 15:00,2014-06-26 15:00,2014-07-20 15:00,2014-06-26 15:00,2014-07-20 15:00,2015-04-21 15:00,2015-05-14 15:00,,PT_Normal,,,,,ZEf9ZxtkAE+BstGrWXEQLw,tT6HDhzo7Emx2FmVps+GCw,,,N,0,0,,,2014-04-13 07:21,2014-04-14 16:04,admin,admin,
3180,143277,6971,40377,7842,0,N,N,N,CP_Phys,TT_Task,DT_FixedDrtn,TK_NotStart,CZA-TK-0515-2980,Inspection,8394,2560,0,10,0,0,0,10,0,0,0,,,,2015-05-14 15:00,2015-05-16 15:00,,2014-07-20 15:00,2014-07-21 15:00,2014-07-20 15:00,2014-07-21 15:00,2014-07-20 15:00,2014-07-21 15:00,2015-05-14 15:00,2015-05-16 15:00,,PT_Normal,,,,,lDU3PZ8qIUiEmzrHokHdsg,yB9h8Q2AAU6kVuT98lLDRw,,,N,0,0,,,2014-04-13 07:21,2014-04-14 16:04,admin,admin,
3181,143278,6971,40378,7842,0,N,N,N,CP_Phys,TT_Task,DT_FixedDrtn,TK_NotStart,CZA-TK-0515-2760,Erection and Fit-up,8394,2560,0,10,0,3.256388,3.256388,10,0,0,0,,,,2015-03-11 09:00,2015-03-12 09:00,,2014-05-17 09:00,2014-05-18 09:00,2014-05-17 09:00,2014-05-18 09:00,2014-05-17 09:00,2014-05-18 09:00,2015-03-11 09:00,2015-03-12 09:00,,PT_Normal,,,,,isJxJXlZj0OdfKuVhM1P7A,bop1foE+4EOq9NN48mGQkQ,,,N,0,0,,,2014-04-13 07:21,2014-04-14 16:04,admin,admin,
3182,143279,6971,40378,7842,0,N,N,N,CP_Phys,TT_Task,DT_FixedDrtn,TK_NotStart,CZA-TK-0515-2770,Welding,8394,2560,0,30,0,4.070485,4.070485,30,60,0,60,,,,2015-03-12 09:00,2015-03-16 09:00,,2014-05-18 09:00,2014-05-21 09:00,2014-05-18 09:00,2014-05-21 09:00,2014-05-18 09:00,2014-05-21 09:00,2015-03-12 09:00,2015-03-16 09:00,,PT_Normal,,,,,nnRVnZYka0Ki6AuTQeT5Cw,a4fvnrQ2iUCmPIf9HQ8o3w,,,N,0,0,,,2014-04-13 07:21,2014-04-14 16:04,admin,admin,
3183,143280,6971,40378,7842,0,N,N,N,CP_Phys,TT_Task,DT_FixedDrtn,TK_NotStart,CZA-TK-0515-2780,Inspection,8394,2560,0,40,0,0.814097,0.814097,40,0,0,0,,,,2015-03-11 09:00,2015-03-16 09:00,,2014-05-17 09:00,2014-05-21 09:00,2014-05-17 09:00,2014-05-21 09:00,2014-05-17 09:00,2014-05-21 09:00,2015-03-11 09:00,2015-03-16 09:00,,PT_Normal,,,,,f/AAP2sUBU+XZWB8MaveRg,R2vNvfpk/0aAetwmGUYzJQ,,,N,0,0,,,2014-04-13 07:21,2014-04-14 16:04,admin,admin,
3184,143281,6971,40379,7842,0,N,N,N,CP_Phys,TT_Task,DT_FixedDrtn,TK_NotStart,CZA-TK-0515-2790,Laying and Fit-up,8394,2560,0,20,0,54.279695,54.279695,20,40,0,40,,,,2015-03-16 09:00,2015-03-18 09:00,,2014-05-21 09:00,2014-05-24 09:00,2014-05-21 09:00,2014-05-24 09:00,2014-05-21 09:00,2014-05-24 09:00,2015-03-16 09:00,2015-03-18 09:00,,PT_Normal,,,,,BNKh3LByaEG1G++JcWB9lQ,Kf+pY5Ujd0iRlKHwgkBzvg,,,N,0,0,,,2014-04-13 07:21,2014-04-14 16:04,admin,admin,
3185,143282,6971,40379,7842,0,N,N,N,CP_Phys,TT_Task,DT_FixedDrtn,TK_NotStart,CZA-TK-0515-2800,Welding,8394,2560,0,50,0,67.849619,67.849619,50,100,0,100,,,,2015-03-18 09:00,2015-03-24 09:00,,2014-05-24 09:00,2014-05-29 09:00,2014-05-24 09:00,2014-05-29 09:00,2014-05-24 09:00,2014-05-29 09:00,2015-03-18 09:00,2015-03-24 09:00,,PT_Normal,,,,,UiQaH9oJ7kyn+vMySUI0SA,od0jEuBhSkihMh3GPmycyg,,,N,0,0,,,2014-04-13 07:21,2014-04-14 16:04,admin,admin,
3186,143283,6971,40379,7842,0,N,N,N,CP_Phys,TT_Task,DT_FixedDrtn,TK_NotStart,CZA-TK-0515-2810,Inspection,8394,2560,0,70,0,13.569924,13.569924,70,0,0,0,,,,2015-03-16 09:00,2015-03-24 09:00,,2014-05-21 09:00,2014-05-29 09:00,2014-05-21 09:00,2014-05-29 09:00,2014-05-21 09:00,2014-05-29 09:00,2015-03-16 09:00,2015-03-24 09:00,,PT_Normal,,,,,G9/mMpHO4kqE7LYe9iy15A,SoALB1jsMkifR/wZqB6gNQ,,,N,0,0,,,2014-04-13 07:21,2014-04-14 16:04,admin,admin,
3187,143284,6971,40380,7842,0,N,N,N,CP_Phys,TT_Task,DT_FixedDrtn,TK_NotStart,CZA-TK-0515-2820,Laying and Fit-up,8394,2560,0,10,0,0,0,10,20,0,20,,,,2015-03-24 09:00,2015-03-25 09:00,,2014-05-29 09:00,2014-05-31 09:00,2014-05-29 09:00,2014-05-31 09:00,2014-05-29 09:00,2014-05-31 09:00,2015-03-24 09:00,2015-03-25 09:00,,PT_Normal,,,,,JJXrrImoDE2/TJ6A3MgLuA,vZDV3DYtFkapkF0n/9I7sg,,,N,0,0,,,2014-04-13 07:21,2014-04-14 16:04,admin,admin,
3188,143285,6971,40380,7842,0,N,N,N,CP_Phys,TT_Task,DT_FixedDrtn,TK_NotStart,CZA-TK-0515-2830,Welding,8394,2560,0,40,0,0,0,40,80,0,80,,,,2015-03-25 09:00,2015-03-30 09:00,,2014-05-31 09:00,2014-06-04 09:00,2014-05-31 09:00,2014-06-04 09:00,2014-05-31 09:00,2014-06-04 09:00,2015-03-25 09:00,2015-03-30 09:00,,PT_Normal,,,,,PpK6H1SsHEqdOFmJ7OtjIQ,tsp8zygpEE6312DQZScm5A,,,N,0,0,,,2014-04-13 07:21,2014-04-14 16:04,admin,admin,
3189,143286,6971,40380,7842,0,N,N,N,CP_Phys,TT_Task,DT_FixedDrtn,TK_NotStart,CZA-TK-0515-2840,Inspection,8394,2560,0,50,0,0,0,50,0,0,0,,,,2015-03-24 09:00,2015-03-30 09:00,,2014-05-29 09:00,2014-06-04 09:00,2014-05-29 09:00,2014-06-04 09:00,2014-05-29 09:00,2014-06-04 09:00,2015-03-24 09:00,2015-03-30 09:00,,PT_Normal,,,,,ntR5schhjkW6ajEY8XbhPQ,aPHE0QjlJUW9msJ+uf3gYg,,,N,0,0,,,2014-04-13 07:21,2014-04-14 16:04,admin,admin,
3190,143287,6971,40381,7842,0,N,N,N,CP_Phys,TT_Task,DT_FixedDrtn,TK_NotStart,CZA-TK-0515-2850,Installation and Fit-up,8394,2560,0,20,0,0,0,20,40,0,40,,,,2015-03-30 09:00,2015-04-01 09:00,,2014-06-04 09:00,2014-06-07 09:00,2014-06-04 09:00,2014-06-07 09:00,2014-06-04 09:00,2014-06-07 09:00,2015-03-30 09:00,2015-04-01 09:00,,PT_Normal,,,,,6Dc5Qw91PkORaPj9qm1cDg,gvaI3nCEnUiOSeMcSIaFYw,,,N,0,0,,,2014-04-13 07:21,2014-04-14 16:04,admin,admin,
3191,143288,6971,40381,7842,0,N,N,N,CP_Phys,TT_Task,DT_FixedDrtn,TK_NotStart,CZA-TK-0515-2860,Welding,8394,2560,0,40,0,0,0,40,80,0,80,,,,2015-04-01 09:00,2015-04-06 09:00,,2014-06-07 09:00,2014-06-11 09:00,2014-06-07 09:00,2014-06-11 09:00,2014-06-07 09:00,2014-06-11 09:00,2015-04-01 09:00,2015-04-06 09:00,,PT_Normal,,,,,TK/2xQ4yD0mtD0zZGk7R3g,l0gsd2s0V0CK/Rw51TucPw,,,N,0,0,,,2014-04-13 07:21,2014-04-14 16:04,admin,admin,
3192,143289,6971,40381,7842,0,N,N,N,CP_Phys,TT_Task,DT_FixedDrtn,TK_NotStart,CZA-TK-0515-2870,Inspection,8394,2560,0,60,0,0,0,60,0,0,0,,,,2015-03-30 09:00,2015-04-06 09:00,,2014-06-04 09:00,2014-06-11 09:00,2014-06-04 09:00,2014-06-11 09:00,2014-06-04 09:00,2014-06-11 09:00,2015-03-30 09:00,2015-04-06 09:00,,PT_Normal,,,,,/FECOy9y9k2VpOIQG1eQKA,SfWvrWjGi0a/2EMdn+h3qQ,,,N,0,0,,,2014-04-13 07:21,2014-04-14 16:04,admin,admin,
3193,143290,6971,40382,7842,0,N,N,N,CP_Phys,TT_Task,DT_FixedDrtn,TK_NotStart,CZA-TK-0515-2880,Erection and Fit-up,8394,2560,0,30,0,0,0,30,60,0,60,,,,2015-03-31 15:00,2015-04-04 15:00,,2014-06-05 15:00,2014-06-09 15:00,2014-06-05 15:00,2014-06-09 15:00,2014-06-05 15:00,2014-06-09 15:00,2015-03-31 15:00,2015-04-04 15:00,,PT_Normal,,,,,sDGdru9OOkK6jNknyuw0ZQ,U5tmi1PQs0qEqz5rH6yhxQ,,,N,0,0,,,2014-04-13 07:21,2014-04-14 16:04,admin,admin,
3194,143291,6971,40382,7842,0,N,N,N,CP_Phys,TT_Task,DT_FixedDrtn,TK_NotStart,CZA-TK-0515-2890,Welding,8394,2560,0,110,0,0,0,110,220,0,220,,,,2015-04-04 15:00,2015-04-16 15:00,,2014-06-09 15:00,2014-06-22 15:00,2014-06-09 15:00,2014-06-22 15:00,2014-06-09 15:00,2014-06-22 15:00,2015-04-04 15:00,2015-04-16 15:00,,PT_Normal,,,,,Ir8JHSIISEWsMDtS+FmPBQ,OZpPEDXuoUmjTcmSheWohA,,,N,0,0,,,2014-04-13 07:21,2014-04-14 16:04,admin,admin,
3195,143292,6971,40382,7842,0,N,N,N,CP_Phys,TT_Task,DT_FixedDrtn,TK_NotStart,CZA-TK-0515-2900,Inspection,8394,2560,0,140,0,0,0,140,0,0,0,,,,2015-03-31 15:00,2015-04-16 15:00,,2014-06-05 15:00,2014-06-22 15:00,2014-06-05 15:00,2014-06-22 15:00,2014-06-05 15:00,2014-06-22 15:00,2015-03-31 15:00,2015-04-16 15:00,,PT_Normal,,,,,Bl1sDt5XdEWSFoGFZg9uzg,Fq0gFYiM6UKUcquOoXiRFw,,,N,0,0,,,2014-04-13 07:21,2014-04-14 16:04,admin,admin,
3196,143293,6971,40492,7842,0,N,N,N,CP_Phys,TT_Task,DT_FixedDrtn,TK_NotStart,CZA-TK-0515-2910,Erection and Fit-up,8394,2560,0,30,0,0,0,30,0,0,0,,,,2015-03-31 15:00,2015-04-04 15:00,,2014-06-05 15:00,2014-06-09 15:00,2014-06-05 15:00,2014-06-09 15:00,2014-06-05 15:00,2014-06-09 15:00,2015-03-31 15:00,2015-04-04 15:00,,PT_Normal,,,,,ejuC2mVOO0aqOylozHr4VQ,28Mnp7zY7k+fynOumlfPdQ,,,N,0,0,,,2014-04-13 07:21,2014-04-14 16:04,admin,admin,
3197,143294,6971,40492,7842,0,N,N,N,CP_Phys,TT_Task,DT_FixedDrtn,TK_NotStart,CZA-TK-0515-2920,Welding,8394,2560,0,110,0,0,0,110,0,0,0,,,,2015-04-04 15:00,2015-04-16 15:00,,2014-06-09 15:00,2014-06-22 15:00,2014-06-09 15:00,2014-06-22 15:00,2014-06-09 15:00,2014-06-22 15:00,2015-04-04 15:00,2015-04-16 15:00,,PT_Normal,,,,,IiYQx0NDu0m47k+7WZsEkg,c+uW2Qmq6k+Y8ZbNGUOz0A,,,N,0,0,,,2014-04-13 07:21,2014-04-14 16:04,admin,admin,
3198,143295,6971,40492,7842,0,N,N,N,CP_Phys,TT_Task,DT_FixedDrtn,TK_NotStart,CZA-TK-0515-2930,Inspection,8394,2560,0,140,0,0,0,140,0,0,0,,,,2015-03-31 15:00,2015-04-16 15:00,,2014-06-05 15:00,2014-06-22 15:00,2014-06-05 15:00,2014-06-22 15:00,2014-06-05 15:00,2014-06-22 15:00,2015-03-31 15:00,2015-04-16 15:00,,PT_Normal,,,,,QJCQKAvpj0mtbPh8jcCY/w,POAX8oEybUWifURP4vdBzg,,,N,0,0,,,2014-04-13 07:21,2014-04-14 16:04,admin,admin,
3199,143296,6971,40384,7842,0,N,N,N,CP_Phys,TT_Task,DT_FixedDrtn,TK_NotStart,CZA-TK-0515-2940,Installation of Primary and Secondary Seal,8394,2560,0,40,0,0,0,40,0,0,0,,,,2015-04-16 15:00,2015-04-21 15:00,,2014-06-22 15:00,2014-06-26 15:00,2014-06-22 15:00,2014-06-26 15:00,2014-06-22 15:00,2014-06-26 15:00,2015-04-16 15:00,2015-04-21 15:00,,PT_Normal,,,,,KCdSEDTy9EiKBbHjE8nv6w,OgTbBligzUatR/+Q7gf25Q,,,N,0,0,,,2014-04-13 07:21,2014-04-14 16:04,admin,admin,
3200,143297,6971,40384,7842,0,N,N,N,CP_Phys,TT_Task,DT_FixedDrtn,TK_NotStart,CZA-TK-0515-2950,Inspection,8394,2560,0,40,0,0,0,40,0,0,0,,,,2015-04-16 15:00,2015-04-21 15:00,,2014-06-22 15:00,2014-06-26 15:00,2014-06-22 15:00,2014-06-26 15:00,2014-06-22 15:00,2014-06-26 15:00,2015-04-16 15:00,2015-04-21 15:00,,PT_Normal,,,,,cOeOnTGTPUGMqJJH01QLyA,DruhZrP1PE6wSyRDhFZQtw,,,N,0,0,,,2014-04-13 07:21,2014-04-14 16:04,admin,admin,
3201,143298,6971,40067,7842,0,N,N,N,CP_Phys,TT_Mile,DT_FixedDrtn,TK_NotStart,CZA-TK-0515-2300,Foundation Takeover from Client,,0,0,0,0,0,0,0,0,0,0,2014-03-25 13:00,,,2014-03-25 13:00,2014-03-25 13:00,,2014-03-25 13:00,2014-03-25 13:00,2014-03-25 13:00,2014-03-25 13:00,2014-03-25 13:00,2014-03-25 13:00,2014-03-25 13:00,2014-03-25 13:00,CS_MSO,PT_Normal,,,,,PyuuTVxAIkespEEDdAr/vQ,1EAo/XzVLU2xolxQfAvxHw,,,N,0,0,,,2014-04-13 07:21,2014-04-13 07:21,admin,admin,
3202,143299,6971,40068,7842,0,N,N,N,CP_Phys,TT_Task,DT_FixedDrtn,TK_NotStart,CZA-TK-0515-2990,"Filling, Holding and Draining of Water",8394,2560,0,100,0,1356.00739,1356.00739,100,0,0,0,,,,2015-05-16 15:00,2015-05-27 15:00,,2014-07-21 15:00,2014-08-02 15:00,2014-07-21 15:00,2014-08-02 15:00,2014-07-21 15:00,2014-08-02 15:00,2015-05-16 15:00,2015-05-27 15:00,,PT_Normal,,,,,NELRiA606EGWuTYnQ2yaWA,CbPCbWhwg0W3BQdb5LRCSQ,,,N,0,0,,,2014-04-13 07:21,2014-04-14 16:04,admin,admin,
3203,143300,6971,40069,7842,0,N,N,N,CP_Phys,TT_Task,DT_FixedDrtn,TK_NotStart,CZA-TK-0515-3000,"Blasting and Painting of Bottom, Shell and Roof (Inside and Outside)",8394,2560,0,200,0,813.604434,813.604434,200,0,0,0,,,,2015-05-27 15:00,2015-06-20 15:00,,2014-08-02 15:00,2014-08-25 15:00,2014-08-02 15:00,2014-08-25 15:00,2014-08-02 15:00,2014-08-25 15:00,2015-05-27 15:00,2015-06-20 15:00,,PT_Normal,,,,,1ivLGAoT4Uif+LeEalEVFw,iHmtl8IcV0mwO9CJrzwCAQ,,,N,0,0,,,2014-04-13 07:21,2014-04-14 16:04,admin,admin,
3204,143301,6971,40051,7842,0,N,N,N,CP_Phys,TT_Task,DT_FixedDrtn,TK_NotStart,CZA-TK-0515-3010,Tank Calibration,8394,2560,0,50,0,271.201478,271.201478,50,0,0,0,,,,2015-06-20 15:00,2015-06-25 15:00,,2014-08-25 15:00,2014-08-31 15:00,2014-08-25 15:00,2014-08-31 15:00,2014-08-25 15:00,2014-08-31 15:00,2015-06-20 15:00,2015-06-25 15:00,,PT_Normal,,,,,So4AE2morkO1WT9EJT0xjQ,l7ZqZhPHbEa+ada3VogjhA,,,N,0,0,,,2014-04-13 07:21,2014-04-14 16:04,admin,admin,
3205,143302,6971,40051,7842,0,N,N,N,CP_Phys,TT_Task,DT_FixedDrtn,TK_NotStart,CZA-TK-0515-3020,Tank Handover,8394,2560,2560,20,0,271.201478,271.201478,20,0,0,0,,,,2015-06-25 15:00,2015-06-28 15:00,,2014-08-31 15:00,2014-09-02 15:00,2014-08-31 15:00,2014-09-02 15:00,2014-08-31 15:00,2014-09-02 15:00,2015-06-25 15:00,2015-06-28 15:00,,PT_Normal,,,,,u0ZFpc4uvEKIZ0vQ5C/nyQ,cO2oZPgRpUCVv7PkhBP9Og,,,N,0,0,,,2014-04-13 07:21,2014-04-14 16:04,admin,admin,
3206,143303,6971,40126,7842,0,N,N,N,CP_Phys,TT_Task,DT_FixedDrtn,TK_NotStart,CZA-TK-0511-1990,"Filling, Holding and Draining of Water",8395,2528,0,50,0,746.953223,746.953223,50,0,0,0,,,,2015-06-01 15:00,2015-06-07 15:00,,2014-08-11 07:00,2014-08-16 17:00,2014-08-11 07:00,2014-08-16 17:00,2014-08-11 07:00,2014-08-16 17:00,2015-06-01 15:00,2015-06-07 15:00,,PT_Normal,,,,,OBLi3Qxut0KgB3llpvsEig,RONjGJpd6E+qBloaMO0oUg,,,N,0,0,,,2014-04-13 07:21,2014-04-14 16:04,admin,admin,
3207,143304,6971,40064,7842,0,N,N,N,CP_Phys,TT_Task,DT_FixedDrtn,TK_NotStart,CZA-TK-0511-1470,"Cutting,Fit-up and Welding of Roof Nozzles, Manholes & Other Appurtanances",8500,3829.5,0,70,0,0,0,70,0,0,0,,,,2015-04-12 09:00,2015-04-20 09:00,,2014-01-20 09:30,2014-01-28 09:30,2014-01-20 09:30,2014-01-28 09:30,2014-01-20 09:30,2014-01-28 09:30,2015-04-12 09:00,2015-04-20 09:00,,PT_Normal,,,,,gxrGawKX70WLyX/KAd/VXQ,TmG4bwXb00a29A8pT+5t8Q,,,N,0,0,,,2014-04-13 07:21,2014-04-14 17:03,admin,admin,
3208,143305,6971,40064,7842,0,N,N,N,CP_Phys,TT_Task,DT_FixedDrtn,TK_NotStart,CZA-TK-0511-1490,"Cutting, Fit-up and Welding of Stairway Platfrom, Gratings and Handrails",8500,3829.5,1301.5,100,0,0,0,100,0,0,0,,,,2015-04-13 15:00,2015-04-25 15:00,,2014-01-21 15:30,2014-02-02 15:30,2014-01-21 15:30,2014-02-02 15:30,2014-01-21 15:30,2014-02-02 15:30,2015-04-13 15:00,2015-04-25 15:00,,PT_Normal,,,,,Lm08GS3/AESTKYBMF5hJQw,eY+1DGn9bkmp6siIRAaYCw,,,N,0,0,,,2014-04-13 07:21,2014-04-14 17:03,admin,admin,
3209,143306,6971,40064,7842,0,N,N,N,CP_Phys,TT_Task,DT_FixedDrtn,TK_NotStart,CZA-TK-0511-1480,"Cutting, Fit-up & Welding  of Roof Platform, Gratings and Handrails",8500,3829.5,0,100,0,0,0,100,0,0,0,,,,2015-04-13 15:00,2015-04-25 15:00,,2014-01-21 15:30,2014-02-02 15:30,2014-01-21 15:30,2014-02-02 15:30,2014-01-21 15:30,2014-02-02 15:30,2015-04-13 15:00,2015-04-25 15:00,,PT_Normal,,,,,3qjB+/oy5EGQlunSfaHxgA,g0s4TsdvdEiE5Q0TV2ZAiA,,,N,0,0,,,2014-04-13 07:21,2014-04-14 17:03,admin,admin,
3210,143307,6971,40064,7842,0,N,N,N,CP_Phys,TT_Task,DT_FixedDrtn,TK_NotStart,CZA-TK-0511-1350,Cutting of Annular Plate,8500,2906,0,10,0,50.475,50.475,10,0,0,0,,,,2014-12-02 13:00,2014-12-03 13:00,,2013-12-29 07:00,2013-12-29 17:00,2013-12-29 07:00,2013-12-29 17:00,2013-12-29 07:00,2013-12-29 17:00,2014-12-02 13:00,2014-12-03 13:00,,PT_Normal,,,,,U64lf0OeQ0KcW+X7odjKBg,95a3zntk2EOYAr4dgHAIAg,,,N,0,0,,,2014-04-13 07:21,2014-04-14 17:03,admin,admin,
3211,143308,6971,40064,7842,0,N,N,N,CP_Phys,TT_Task,DT_FixedDrtn,TK_NotStart,CZA-TK-0511-1360,Cutting of Bottom Plates,8500,3829.5,0,10,0,107.9424,107.9424,10,0,0,0,,,,2015-03-21 16:30,2015-03-22 16:30,,2013-12-30 07:00,2013-12-30 17:00,2013-12-30 07:00,2013-12-30 17:00,2013-12-30 07:00,2013-12-30 17:00,2015-03-21 16:30,2015-03-22 16:30,,PT_Normal,,,,,RhUccFzDXEKiE9wv2f0f8A,UhFyO79G7kSpWXiOFpR2CQ,,,N,0,0,,,2014-04-13 07:21,2014-04-14 17:03,admin,admin,
3212,143309,6971,40064,7842,0,N,N,N,CP_Phys,TT_Task,DT_FixedDrtn,TK_NotStart,CZA-TK-0511-1370,"Cutting, Bevelling & Rolling of Shell No.1",8500,3829.5,0,10,0,65.019,65.019,10,0,0,0,,,,2015-03-22 16:30,2015-03-23 16:30,,2013-12-31 07:00,2013-12-31 17:00,2013-12-31 07:00,2013-12-31 17:00,2013-12-31 07:00,2013-12-31 17:00,2015-03-22 16:30,2015-03-23 16:30,,PT_Normal,,,,,AXtRso0CaEqTARIHxSC1Wg,ORGK0TG0CUeJI6ZhefLi7g,,,N,0,0,,,2014-04-13 07:21,2014-04-14 17:03,admin,admin,
3213,143310,6971,40064,7842,0,N,N,N,CP_Phys,TT_Task,DT_FixedDrtn,TK_NotStart,CZA-TK-0511-1380,"Cutting, Bevelling & Rolling of Shell No.2",8500,3829.5,0,10,0,54.9444,54.9444,10,0,0,0,,,,2015-03-23 16:30,2015-03-24 16:30,,2014-01-01 07:00,2014-01-01 17:00,2014-01-01 07:00,2014-01-01 17:00,2014-01-01 07:00,2014-01-01 17:00,2015-03-23 16:30,2015-03-24 16:30,,PT_Normal,,,,,MqgGbFvL8kKKapzb9gHtvw,tmbuwjv7DE6TEFFR96mpuw,,,N,0,0,,,2014-04-13 07:21,2014-04-14 17:03,admin,admin,
3214,143311,6971,40064,7842,0,N,N,N,CP_Phys,TT_Task,DT_FixedDrtn,TK_NotStart,CZA-TK-0511-1390,"Cutting, Fit-up and Welding of Shell Nozzles,Manholes and Other Appurtanances",8500,3829.5,0,30,0,0,0,30,0,0,0,,,,2015-03-24 16:30,2015-03-28 16:30,,2014-01-02 07:00,2014-01-05 17:00,2014-01-02 07:00,2014-01-05 17:00,2014-01-02 07:00,2014-01-05 17:00,2015-03-24 16:30,2015-03-28 16:30,,PT_Normal,,,,,1WzabNvicE+GTu0scd5Tfw,OTw77rDVdUaib5eXNouRrw,,,N,0,0,,,2014-04-13 07:21,2014-04-14 17:03,admin,admin,
3215,143312,6971,40064,7842,0,N,N,N,CP_Phys,TT_Task,DT_FixedDrtn,TK_NotStart,CZA-TK-0511-1400,"Cutting, Bevelling & Rolling of Shell No.3",8500,3829.5,0,10,0,0,0,10,0,0,0,,,,2015-03-28 16:30,2015-03-29 16:30,,2014-01-06 07:00,2014-01-06 17:00,2014-01-06 07:00,2014-01-06 17:00,2014-01-06 07:00,2014-01-06 17:00,2015-03-28 16:30,2015-03-29 16:30,,PT_Normal,,,,,RD0/ZqZI8k6m9LiC/+TRUg,m5P84o1kIkenUNm1PeOcGw,,,N,0,0,,,2014-04-13 07:21,2014-04-14 17:03,admin,admin,
3216,143313,6971,40064,7842,0,N,N,N,CP_Phys,TT_Task,DT_FixedDrtn,TK_NotStart,CZA-TK-0511-1410,"Cutting, Bevelling & Rolling of Shell No.4",8500,3829.5,0,10,0,0,0,10,0,0,0,,,,2015-03-29 16:30,2015-03-30 16:30,,2014-01-07 07:00,2014-01-07 17:00,2014-01-07 07:00,2014-01-07 17:00,2014-01-07 07:00,2014-01-07 17:00,2015-03-29 16:30,2015-03-30 16:30,,PT_Normal,,,,,lqvIbz3h1UyxCl8QVMOxiA,uUs/NV7GfEaD7BcM0pqN4w,,,N,0,0,,,2014-04-13 07:21,2014-04-14 17:03,admin,admin,
3217,143314,6971,40064,7842,0,N,N,N,CP_Phys,TT_Task,DT_FixedDrtn,TK_NotStart,CZA-TK-0511-1420,"Cutting, Bevelling & Rolling of Shell No.5",8500,3829.5,0,10,0,69.7632,69.7632,10,0,0,0,,,,2015-03-30 16:30,2015-03-31 16:30,,2014-01-08 07:00,2014-01-08 17:00,2014-01-08 07:00,2014-01-08 17:00,2014-01-08 07:00,2014-01-08 17:00,2015-03-30 16:30,2015-03-31 16:30,,PT_Normal,,,,,sqQKNXdnqUK7/1geFQXzkw,RzZDPO2FSUyBYYwghLBtiw,,,N,0,0,,,2014-04-13 07:21,2014-04-14 17:03,admin,admin,
3218,143315,6971,40064,7842,0,N,N,N,CP_Phys,TT_Task,DT_FixedDrtn,TK_NotStart,CZA-TK-0511-1430,"Cutting, Bevelling & Rolling of Shell No.6",8500,3829.5,0,10,0,41.2416,41.2416,10,0,0,0,,,,2015-03-31 16:30,2015-04-01 16:30,,2014-01-09 07:00,2014-01-09 17:00,2014-01-09 07:00,2014-01-09 17:00,2014-01-09 07:00,2014-01-09 17:00,2015-03-31 16:30,2015-04-01 16:30,,PT_Normal,,,,,O2rWyx702EygcxRG04EQuQ,0wo0oZOFBUy7UGVSvpb9LA,,,N,0,0,,,2014-04-13 07:21,2014-04-14 17:03,admin,admin,
3219,143316,6971,40064,7842,0,N,N,N,CP_Phys,TT_Task,DT_FixedDrtn,TK_NotStart,CZA-TK-0511-1440,"Cutting, Bevelling & Rolling of Curb Angle",8500,3829.5,0,20,0,14.775,14.775,20,0,0,0,,,,2015-04-01 16:30,2015-04-04 16:30,,2014-01-11 07:00,2014-01-12 17:00,2014-01-11 07:00,2014-01-12 17:00,2014-01-11 07:00,2014-01-12 17:00,2015-04-01 16:30,2015-04-04 16:30,,PT_Normal,,,,,7zY/D8q/bk26Ic6SEYn8Nw,zwxn9SVIdkKBiiMc9phQtw,,,N,0,0,,,2014-04-13 07:21,2014-04-14 17:03,admin,admin,
3220,143317,6971,40064,7842,0,N,N,N,CP_Phys,TT_Task,DT_FixedDrtn,TK_NotStart,CZA-TK-0511-1450,"Cutting, Bevelling & Rolling of Roof Structure",8500,3829.5,0,50,0,75,75,50,0,0,0,,,,2015-04-04 16:30,2015-04-09 16:30,,2014-01-13 07:00,2014-01-18 17:00,2014-01-13 07:00,2014-01-18 17:00,2014-01-13 07:00,2014-01-18 17:00,2015-04-04 16:30,2015-04-09 16:30,,PT_Normal,,,,,AHg595Vmo0istAkh8gxe9Q,XikyyQBGPECtXa2Uafmj2Q,,,N,0,0,,,2014-04-13 07:21,2014-04-14 17:03,admin,admin,
3221,143318,6971,40064,7842,0,N,N,N,CP_Phys,TT_Task,DT_FixedDrtn,TK_NotStart,CZA-TK-0511-1460,Cutting of Roof Plates,8500,3829.5,0,12.5,0,133.6242,133.6242,12.5,0,0,0,,,,2015-04-09 16:30,2015-04-12 09:00,,2014-01-19 07:00,2014-01-20 09:30,2014-01-19 07:00,2014-01-20 09:30,2014-01-19 07:00,2014-01-20 09:30,2015-04-09 16:30,2015-04-12 09:00,,PT_Normal,,,,,EkuBTeEfSUGTLGngguK0Aw,RNOHOV50zUaOlSC1vLT7Ng,,,N,0,0,,,2014-04-13 07:21,2014-04-14 17:03,admin,admin,
3222,143319,6971,40065,7842,0,N,N,N,CP_Phys,TT_Task,DT_FixedDrtn,TK_NotStart,CZA-TK-0511-2010,Tank Calibration,8395,2598,0,50,0,149.390645,149.390645,50,0,0,0,,,,2015-06-20 15:00,2015-06-25 15:00,,2014-08-21 07:00,2014-08-26 17:00,2014-08-21 07:00,2014-08-26 17:00,2014-08-21 07:00,2014-08-26 17:00,2015-06-20 15:00,2015-06-25 15:00,,PT_Normal,,,,,ha/Sh88Qi0y9UJbrjDnRnw,z7lSZ0LcwU+qR5OgiwK9Eg,,,N,0,0,,,2014-04-13 07:21,2014-04-14 16:04,admin,admin,
3223,143320,6971,40065,7842,0,N,N,N,CP_Phys,TT_Task,DT_FixedDrtn,TK_NotStart,CZA-TK-0511-2020,Tank Handover,8395,2598,2598,20,0,149.390645,149.390645,20,0,0,0,,,,2015-06-25 15:00,2015-06-28 15:00,,2014-08-27 07:00,2014-08-28 17:00,2014-08-27 07:00,2014-08-28 17:00,2014-08-27 07:00,2014-08-28 17:00,2015-06-25 15:00,2015-06-28 15:00,,PT_Normal,,,,,eE1VczkLEkCkTmeEKLRDHQ,Me/X4il3u06IG9jp9hD4Mw,,,N,0,0,,,2014-04-13 07:21,2014-04-14 16:04,admin,admin,
3224,143321,6971,40066,7842,0,N,N,N,CP_Phys,TT_Mile,DT_FixedDrtn,TK_NotStart,CZA-TK-0511-1500,Foundation Takeover from Client,,0,0,0,0,0,0,0,0,0,0,2014-03-23 00:00,,,2014-03-22 17:00,2014-03-22 17:00,,2014-03-23 07:00,2014-03-23 07:00,2014-03-23 07:00,2014-03-23 07:00,2014-03-23 07:00,2014-03-23 07:00,2014-03-22 17:00,2014-03-22 17:00,CS_MSO,PT_Normal,,,,,7iBMHWPdJU+bakhGU83A2A,yKeFZacKUEiwNgAMGEVYlQ,,,N,0,0,,,2014-04-13 07:21,2014-04-13 07:42,admin,admin,
3225,143322,6971,40604,7842,0,N,N,N,CP_Phys,TT_Task,DT_FixedDrtn,TK_NotStart,CZA-TK-0511-1630,"Cutting, Installation and Fit-up",8395,2528,0,20,0,0,0,20,40,0,40,,,,2015-02-02 15:00,2015-02-04 15:00,,2014-04-14 07:00,2014-04-15 17:00,2014-04-14 07:00,2014-04-15 17:00,2014-04-14 07:00,2014-04-15 17:00,2015-02-02 15:00,2015-02-04 15:00,,PT_Normal,,,,,LB+hXAFTfkite0VPbLjj2w,e+w3u8eXtESkkAP9matLjg,,,N,0,0,,,2014-04-13 07:21,2014-04-14 16:04,admin,admin,
3226,143323,6971,40604,7842,0,N,N,N,CP_Phys,TT_Task,DT_FixedDrtn,TK_NotStart,CZA-TK-0511-1640,Welding,8395,2528,0,60,0,0,0,60,120,0,120,,,,2015-02-04 15:00,2015-02-11 15:00,,2014-04-16 07:00,2014-04-22 17:00,2014-04-16 07:00,2014-04-22 17:00,2014-04-16 07:00,2014-04-22 17:00,2015-02-04 15:00,2015-02-11 15:00,,PT_Normal,,,,,N/3Y5bYOfkmgMdnODBwWCg,Gg3w0Fk/ekqELRXsLeggRA,,,N,0,0,,,2014-04-13 07:21,2014-04-14 16:04,admin,admin,
3227,143324,6971,40604,7842,0,N,N,N,CP_Phys,TT_Task,DT_FixedDrtn,TK_NotStart,CZA-TK-0511-1650,Inspection,8395,2528,0,80,0,0,0,80,0,0,0,,,,2015-02-02 15:00,2015-02-11 15:00,,2014-04-14 07:00,2014-04-22 17:00,2014-04-14 07:00,2014-04-22 17:00,2014-04-14 07:00,2014-04-22 17:00,2015-02-02 15:00,2015-02-11 15:00,,PT_Normal,,,,,uStq6VRQFU64nLlbodvOwg,CbO7EJeh2UixnJ8m8X98Uw,,,N,0,0,,,2014-04-13 07:21,2014-04-14 16:04,admin,admin,
3228,143325,6971,40396,7842,0,N,N,N,CP_Phys,TT_Task,DT_FixedDrtn,TK_NotStart,CZA-TK-0511-1660,Erection and Fit-up,8395,2528,0,10,0,0,0,10,20,0,20,,,,2015-02-11 15:00,2015-02-12 15:00,,2014-04-23 07:00,2014-04-23 17:00,2014-04-23 07:00,2014-04-23 17:00,2014-04-23 07:00,2014-04-23 17:00,2015-02-11 15:00,2015-02-12 15:00,,PT_Normal,,,,,svpplobpbEaNFS2we2zibw,OBFD4hyPA0OQ5G+M4rxf5Q,,,N,0,0,,,2014-04-13 07:21,2014-04-14 16:04,admin,admin,
3229,143326,6971,40396,7842,0,N,N,N,CP_Phys,TT_Task,DT_FixedDrtn,TK_NotStart,CZA-TK-0511-1670,Welding,8395,2528,0,40,0,0,0,40,80,0,80,,,,2015-02-12 15:00,2015-02-17 15:00,,2014-04-24 07:00,2014-04-28 17:00,2014-04-24 07:00,2014-04-28 17:00,2014-04-24 07:00,2014-04-28 17:00,2015-02-12 15:00,2015-02-17 15:00,,PT_Normal,,,,,1Q9wY7jip0yJ7uRObsoHhQ,V8UrSe5ZLkSjNn87y3c4/g,,,N,0,0,,,2014-04-13 07:21,2014-04-14 16:04,admin,admin,
3230,143327,6971,40396,7842,0,N,N,N,CP_Phys,TT_Task,DT_FixedDrtn,TK_NotStart,CZA-TK-0511-1680,Inspection,8395,2528,0,50,0,0,0,50,0,0,0,,,,2015-02-11 15:00,2015-02-17 15:00,,2014-04-23 07:00,2014-04-28 17:00,2014-04-23 07:00,2014-04-28 17:00,2014-04-23 07:00,2014-04-28 17:00,2015-02-11 15:00,2015-02-17 15:00,,PT_Normal,,,,,1OG66BjJZ0685+co6SHbRw,0gVBUvhizUygq8FHAmup9A,,,N,0,0,,,2014-04-13 07:21,2014-04-14 16:04,admin,admin,
3231,143328,6971,40397,7842,0,N,N,N,CP_Phys,TT_Task,DT_FixedDrtn,TK_NotStart,CZA-TK-0511-1690,Erection and Fit-up,8395,2528,0,10,0,0,0,10,20,0,20,,,,2015-02-17 15:00,2015-02-18 15:00,,2014-04-29 07:00,2014-04-29 17:00,2014-04-29 07:00,2014-04-29 17:00,2014-04-29 07:00,2014-04-29 17:00,2015-02-17 15:00,2015-02-18 15:00,,PT_Normal,,,,,EGXRqDVn8U+MN2m46zlLSA,onkXdfgMVEWwIfG5g1mdcw,,,N,0,0,,,2014-04-13 07:21,2014-04-14 16:04,admin,admin,
3232,143329,6971,40397,7842,0,N,N,N,CP_Phys,TT_Task,DT_FixedDrtn,TK_NotStart,CZA-TK-0511-1700,Welding,8395,2528,0,40,0,0,0,40,80,0,80,,,,2015-02-18 15:00,2015-02-23 15:00,,2014-04-30 07:00,2014-05-04 17:00,2014-04-30 07:00,2014-05-04 17:00,2014-04-30 07:00,2014-05-04 17:00,2015-02-18 15:00,2015-02-23 15:00,,PT_Normal,,,,,8W8Upy7qIkuTdEa50pTo8w,KTIctB/+hEuaFjwpt0+QDw,,,N,0,0,,,2014-04-13 07:21,2014-04-14 16:04,admin,admin,
3233,143330,6971,40397,7842,0,N,N,N,CP_Phys,TT_Task,DT_FixedDrtn,TK_NotStart,CZA-TK-0511-1710,Inspection,8395,2528,0,50,0,0,0,50,0,0,0,,,,2015-02-17 15:00,2015-02-23 15:00,,2014-04-29 07:00,2014-05-04 17:00,2014-04-29 07:00,2014-05-04 17:00,2014-04-29 07:00,2014-05-04 17:00,2015-02-17 15:00,2015-02-23 15:00,,PT_Normal,,,,,91sZ6IcPtUCkDZ/eF6GIaw,dmgqcKUBVE+CoOjlRLPeeQ,,,N,0,0,,,2014-04-13 07:21,2014-04-14 16:04,admin,admin,
3234,143331,6971,40398,7842,0,N,N,N,CP_Phys,TT_Task,DT_FixedDrtn,TK_NotStart,CZA-TK-0511-1720,Erection and Fit-up,8395,2528,0,10,0,30.54057,30.54057,10,20,0,20,,,,2015-02-23 15:00,2015-02-24 15:00,,2014-05-05 07:00,2014-05-05 17:00,2014-05-05 07:00,2014-05-05 17:00,2014-05-05 07:00,2014-05-05 17:00,2015-02-23 15:00,2015-02-24 15:00,,PT_Normal,,,,,a2WaBEV+QU+U55qKz761NQ,rOsRAO29GkG7u12tFk6dZg,,,N,0,0,,,2014-04-13 07:21,2014-04-14 16:04,admin,admin,
3235,143332,6971,40398,7842,0,N,N,N,CP_Phys,TT_Task,DT_FixedDrtn,TK_NotStart,CZA-TK-0511-1730,Welding,8395,2528,0,40,0,38.175712,38.175712,40,80,0,80,,,,2015-02-24 15:00,2015-03-01 15:00,,2014-05-06 07:00,2014-05-10 17:00,2014-05-06 07:00,2014-05-10 17:00,2014-05-06 07:00,2014-05-10 17:00,2015-02-24 15:00,2015-03-01 15:00,,PT_Normal,,,,,uybXV3kiZESFXgMB1gIHCg,aL8UOMkRLkuu6nuoLxxdHQ,,,N,0,0,,,2014-04-13 07:21,2014-04-14 16:04,admin,admin,
3236,143333,6971,40398,7842,0,N,N,N,CP_Phys,TT_Task,DT_FixedDrtn,TK_NotStart,CZA-TK-0511-1740,Inspection,8395,2528,0,50,0,7.635142,7.635142,50,0,0,0,,,,2015-02-23 15:00,2015-03-01 15:00,,2014-05-05 07:00,2014-05-10 17:00,2014-05-05 07:00,2014-05-10 17:00,2014-05-05 07:00,2014-05-10 17:00,2015-02-23 15:00,2015-03-01 15:00,,PT_Normal,,,,,wcaF6LXUbUGY2XAK0iSqxA,xcuNPL/F/U+73pQAtQLgbQ,,,N,0,0,,,2014-04-13 07:21,2014-04-14 16:04,admin,admin,
3237,143334,6971,40399,7842,0,N,N,N,CP_Phys,TT_Task,DT_FixedDrtn,TK_NotStart,CZA-TK-0511-1750,Erection and Fit-up,8395,2528,0,10,0,18.054532,18.054532,10,20,0,20,,,,2015-03-01 15:00,2015-03-02 15:00,,2014-05-11 07:00,2014-05-11 17:00,2014-05-11 07:00,2014-05-11 17:00,2014-05-11 07:00,2014-05-11 17:00,2015-03-01 15:00,2015-03-02 15:00,,PT_Normal,,,,,8VCduodjDUmfpRoDFFLLiQ,8ILuBvxp1kG9tJtK+3MkMw,,,N,0,0,,,2014-04-13 07:21,2014-04-14 16:04,admin,admin,
3238,143335,6971,40399,7842,0,N,N,N,CP_Phys,TT_Task,DT_FixedDrtn,TK_NotStart,CZA-TK-0511-1760,Welding,8395,2528,0,40,0,22.568166,22.568166,40,80,0,80,,,,2015-03-02 15:00,2015-03-07 15:00,,2014-05-12 07:00,2014-05-15 17:00,2014-05-12 07:00,2014-05-15 17:00,2014-05-12 07:00,2014-05-15 17:00,2015-03-02 15:00,2015-03-07 15:00,,PT_Normal,,,,,I6VryY3690a0Ewx9ab0Q5A,PAQwMJUE/USD2OTGSWK9VQ,,,N,0,0,,,2014-04-13 07:21,2014-04-14 16:04,admin,admin,
3239,143336,6971,40399,7842,0,N,N,N,CP_Phys,TT_Task,DT_FixedDrtn,TK_NotStart,CZA-TK-0511-1770,Inspection,8395,2528,0,50,0,4.513633,4.513633,50,0,0,0,,,,2015-03-01 15:00,2015-03-07 15:00,,2014-05-11 07:00,2014-05-15 17:00,2014-05-11 07:00,2014-05-15 17:00,2014-05-11 07:00,2014-05-15 17:00,2015-03-01 15:00,2015-03-07 15:00,,PT_Normal,,,,,KYDg8jks2UavpfEDk2he7g,pe8djkfGz0irM5X6b0gHWQ,,,N,0,0,,,2014-04-13 07:21,2014-04-14 16:04,admin,admin,
3240,143337,6971,40400,7842,0,N,N,N,CP_Phys,TT_Task,DT_FixedDrtn,TK_NotStart,CZA-TK-0511-1780,"Cutting, Installation and Fit-up",8395,2528,0,20,0,0,0,20,40,0,40,,,,2015-03-07 15:00,2015-03-09 15:00,,2014-05-17 07:00,2014-05-18 17:00,2014-05-17 07:00,2014-05-18 17:00,2014-05-17 07:00,2014-05-18 17:00,2015-03-07 15:00,2015-03-09 15:00,,PT_Normal,,,,,+LFv3sVRi0uYK+mRj6OOpw,bmtn4On8n02BSq3la0C3gA,,,N,0,0,,,2014-04-13 07:21,2014-04-14 16:04,admin,admin,
3241,143338,6971,40400,7842,0,N,N,N,CP_Phys,TT_Task,DT_FixedDrtn,TK_NotStart,CZA-TK-0511-1790,Welding,8395,2528,0,50,0,0,0,50,100,0,100,,,,2015-03-09 15:00,2015-03-15 15:00,,2014-05-19 07:00,2014-05-24 17:00,2014-05-19 07:00,2014-05-24 17:00,2014-05-19 07:00,2014-05-24 17:00,2015-03-09 15:00,2015-03-15 15:00,,PT_Normal,,,,,v9rzTwvBnE+7XS7ilswhUg,PFnRo5RwtEq0RmweKk6UiQ,,,N,0,0,,,2014-04-13 07:21,2014-04-14 16:04,admin,admin,
3242,143339,6971,40400,7842,0,N,N,N,CP_Phys,TT_Task,DT_FixedDrtn,TK_NotStart,CZA-TK-0511-1800,Inspection,8395,2528,0,70,0,0,0,70,0,0,0,,,,2015-03-07 15:00,2015-03-15 15:00,,2014-05-17 07:00,2014-05-24 17:00,2014-05-17 07:00,2014-05-24 17:00,2014-05-17 07:00,2014-05-24 17:00,2015-03-07 15:00,2015-03-15 15:00,,PT_Normal,,,,,0SjiRQ3hf0aBKxvFdCsoBw,TUfPa4NQFkiGT/KBycoIvw,,,N,0,0,,,2014-04-13 07:21,2014-04-14 16:04,admin,admin,
3243,143340,6971,40401,7842,0,N,N,N,CP_Phys,TT_Task,DT_FixedDrtn,TK_NotStart,CZA-TK-0511-1810,Erection and Fit-up,8395,2528,0,10,0,6.468122,6.468122,10,0,0,0,,,,2015-03-15 15:00,2015-03-16 15:00,,2014-05-25 07:00,2014-05-25 17:00,2014-05-25 07:00,2014-05-25 17:00,2014-05-25 07:00,2014-05-25 17:00,2015-03-15 15:00,2015-03-16 15:00,,PT_Normal,,,,,1B3HfB7IBU2okBSIaam1FQ,nPuu4OCz6EaCaIjCgT8Qtw,,,N,0,0,,,2014-04-13 07:21,2014-04-14 16:04,admin,admin,
3244,143341,6971,40401,7842,0,N,N,N,CP_Phys,TT_Task,DT_FixedDrtn,TK_NotStart,CZA-TK-0511-1820,Welding,8395,2528,0,20,0,8.085153,8.085153,20,40,0,40,,,,2015-03-16 15:00,2015-03-18 15:00,,2014-05-26 07:00,2014-05-27 17:00,2014-05-26 07:00,2014-05-27 17:00,2014-05-26 07:00,2014-05-27 17:00,2015-03-16 15:00,2015-03-18 15:00,,PT_Normal,,,,,smApRIF4QUG9u1J9HysQ9g,iczUenccpE+noW1sYeJoeg,,,N,0,0,,,2014-04-13 07:21,2014-04-14 16:04,admin,admin,
3245,143342,6971,40401,7842,0,N,N,N,CP_Phys,TT_Task,DT_FixedDrtn,TK_NotStart,CZA-TK-0511-1830,Inspection,8395,2528,0,30,0,1.617031,1.617031,30,0,0,0,,,,2015-03-15 15:00,2015-03-18 15:00,,2014-05-25 07:00,2014-05-27 17:00,2014-05-25 07:00,2014-05-27 17:00,2014-05-25 07:00,2014-05-27 17:00,2015-03-15 15:00,2015-03-18 15:00,,PT_Normal,,,,,8aWb1E0nZU24N5JjEwJRUQ,n6aaW7cOQUuvAR4yxbLZUA,,,N,0,0,,,2014-04-13 07:21,2014-04-14 16:04,admin,admin,
3246,143343,6971,40402,7842,0,N,N,N,CP_Phys,TT_Task,DT_FixedDrtn,TK_NotStart,CZA-TK-0511-1840,Laying and Fit-up,8395,2528,0,20,0,32.833109,32.833109,20,40,0,40,,,,2015-03-18 15:00,2015-03-21 15:00,,2014-05-28 07:00,2014-05-29 17:00,2014-05-28 07:00,2014-05-29 17:00,2014-05-28 07:00,2014-05-29 17:00,2015-03-18 15:00,2015-03-21 15:00,,PT_Normal,,,,,nN669M+YJ0GK52cAyyQqdQ,sz7IZgYrW0KIaDutltfiIw,,,N,0,0,,,2014-04-13 07:21,2014-04-14 16:04,admin,admin,
3247,143344,6971,40402,7842,0,N,N,N,CP_Phys,TT_Task,DT_FixedDrtn,TK_NotStart,CZA-TK-0511-1850,Welding,8395,2528,0,70,0,41.041386,41.041386,70,140,0,140,,,,2015-03-21 15:00,2015-03-29 15:00,,2014-05-31 07:00,2014-06-07 17:00,2014-05-31 07:00,2014-06-07 17:00,2014-05-31 07:00,2014-06-07 17:00,2015-03-21 15:00,2015-03-29 15:00,,PT_Normal,,,,,k71VwlSxNk+umbgWZuWdVQ,rLdH748NzUqvc2Bkhrq3eQ,,,N,0,0,,,2014-04-13 07:21,2014-04-14 16:04,admin,admin,
3248,143345,6971,40402,7842,0,N,N,N,CP_Phys,TT_Task,DT_FixedDrtn,TK_NotStart,CZA-TK-0511-1860,Inspection,8395,2528,0,90,0,8.208277,8.208277,90,0,0,0,,,,2015-03-18 15:00,2015-03-29 15:00,,2014-05-28 07:00,2014-06-07 17:00,2014-05-28 07:00,2014-06-07 17:00,2014-05-28 07:00,2014-06-07 17:00,2015-03-18 15:00,2015-03-29 15:00,,PT_Normal,,,,,YjQYRIo8HUWV+hIGH2jaTA,35z80FqdY0e7D0fZ3T3Ahg,,,N,0,0,,,2014-04-13 07:21,2014-04-14 16:04,admin,admin,
3249,143346,6971,40403,7842,0,N,N,N,CP_Phys,TT_Task,DT_FixedDrtn,TK_NotStart,CZA-TK-0511-1870,Laying and Fit-up,8395,2528,0,20,0,58.497305,58.497305,20,40,0,40,,,,2015-03-29 15:00,2015-03-31 15:00,,2014-06-08 07:00,2014-06-09 17:00,2014-06-08 07:00,2014-06-09 17:00,2014-06-08 07:00,2014-06-09 17:00,2015-03-29 15:00,2015-03-31 15:00,,PT_Normal,,,,,GBx8UKAAuUCDanOlmGWeOw,6A0SqhES20y6hxJgkJ/MJA,,,N,0,0,,,2014-04-13 07:21,2014-04-14 16:04,admin,admin,
3250,143347,6971,40403,7842,0,N,N,N,CP_Phys,TT_Task,DT_FixedDrtn,TK_NotStart,CZA-TK-0511-1890,Inspection,8395,2528,0,70,0,14.624326,14.624326,70,0,0,0,,,,2015-03-29 15:00,2015-04-06 15:00,,2014-06-08 07:00,2014-06-15 17:00,2014-06-08 07:00,2014-06-15 17:00,2014-06-08 07:00,2014-06-15 17:00,2015-03-29 15:00,2015-04-06 15:00,,PT_Normal,,,,,S44HZTT/fUm55rxOy3WQAg,XOHfb1Ckbk6Kpig1AI+Ybw,,,N,0,0,,,2014-04-13 07:21,2014-04-14 16:04,admin,admin,
3251,143348,6971,40403,7842,0,N,N,N,CP_Phys,TT_Task,DT_FixedDrtn,TK_NotStart,CZA-TK-0511-1880,Welding,8395,2528,0,50,0,73.121631,73.121631,50,100,0,100,,,,2015-03-31 15:00,2015-04-06 15:00,,2014-06-10 07:00,2014-06-15 17:00,2014-06-10 07:00,2014-06-15 17:00,2014-06-10 07:00,2014-06-15 17:00,2015-03-31 15:00,2015-04-06 15:00,,PT_Normal,,,,,e1qywT+9mUK3BEoZMii+ig,51hbQY6vYEiKwzTjrzrbSw,,,N,0,0,,,2014-04-13 07:21,2014-04-14 16:04,admin,admin,
3252,143349,6971,40404,7842,0,N,N,N,CP_Phys,TT_Task,DT_FixedDrtn,TK_NotStart,CZA-TK-0511-1900,Installation and Fit-up,8395,2528,0,40,0,0,0,40,80,0,80,,,,2015-04-06 15:00,2015-04-11 15:00,,2014-06-16 07:00,2014-06-19 17:00,2014-06-16 07:00,2014-06-19 17:00,2014-06-16 07:00,2014-06-19 17:00,2015-04-06 15:00,2015-04-11 15:00,,PT_Normal,,,,,Jz1orEVVykSQr6db/d/wPA,iaKzuWIHqUGhS8WEADCviA,,,N,0,0,,,2014-04-13 07:21,2014-04-14 16:04,admin,admin,
3253,143350,6971,40404,7842,0,N,N,N,CP_Phys,TT_Task,DT_FixedDrtn,TK_NotStart,CZA-TK-0511-1910,Welding,8395,2528,0,120,0,0,0,120,240,0,240,,,,2015-04-11 15:00,2015-04-25 15:00,,2014-06-21 07:00,2014-07-03 17:00,2014-06-21 07:00,2014-07-03 17:00,2014-06-21 07:00,2014-07-03 17:00,2015-04-11 15:00,2015-04-25 15:00,,PT_Normal,,,,,QF6+YmiD4UuEu6a/X1eA7A,VbWPtUaA8UyEocJmCMjuAA,,,N,0,0,,,2014-04-13 07:21,2014-04-14 16:04,admin,admin,
3254,143351,6971,40404,7842,0,N,N,N,CP_Phys,TT_Task,DT_FixedDrtn,TK_NotStart,CZA-TK-0511-1920,Inspection,8395,2528,0,160,0,0,0,160,0,0,0,,,,2015-04-06 15:00,2015-04-25 15:00,,2014-06-16 07:00,2014-07-03 17:00,2014-06-16 07:00,2014-07-03 17:00,2014-06-16 07:00,2014-07-03 17:00,2015-04-06 15:00,2015-04-25 15:00,,PT_Normal,,,,,Cv77dwT3KkOMc5V6okIOGg,gkWjbXZ/JkSsSpfVe67dhw,,,N,0,0,,,2014-04-13 07:21,2014-04-14 16:04,admin,admin,
3255,143352,6971,40405,7842,0,N,N,N,CP_Phys,TT_Task,DT_FixedDrtn,TK_NotStart,CZA-TK-0511-1930,Erection and Fit-up,8395,2528,0,40,0,0,0,40,80,0,80,,,,2015-04-25 15:00,2015-04-29 15:00,,2014-07-05 07:00,2014-07-08 17:00,2014-07-05 07:00,2014-07-08 17:00,2014-07-05 07:00,2014-07-08 17:00,2015-04-25 15:00,2015-04-29 15:00,,PT_Normal,,,,,4ECXFgBY3kOSXCX1ud8GSA,Y2W3SPaX40WRUlSDjD7dsg,,,N,0,0,,,2014-04-13 07:21,2014-04-14 16:04,admin,admin,
3256,143353,6971,40405,7842,0,N,N,N,CP_Phys,TT_Task,DT_FixedDrtn,TK_NotStart,CZA-TK-0511-1940,Welding,8395,2528,0,120,0,0,0,120,240,0,240,,,,2015-04-29 15:00,2015-05-13 15:00,,2014-07-09 07:00,2014-07-22 17:00,2014-07-09 07:00,2014-07-22 17:00,2014-07-09 07:00,2014-07-22 17:00,2015-04-29 15:00,2015-05-13 15:00,,PT_Normal,,,,,IrtKWbfbvkGhwvCLx70d0A,BGsTl2m2BkiycRF5R74qGA,,,N,0,0,,,2014-04-13 07:21,2014-04-14 16:04,admin,admin,
3257,143354,6971,40405,7842,0,N,N,N,CP_Phys,TT_Task,DT_FixedDrtn,TK_NotStart,CZA-TK-0511-1950,Inspection,8395,2528,0,160,0,0,0,160,0,0,0,,,,2015-04-25 15:00,2015-05-13 15:00,,2014-07-05 07:00,2014-07-22 17:00,2014-07-05 07:00,2014-07-22 17:00,2014-07-05 07:00,2014-07-22 17:00,2015-04-25 15:00,2015-05-13 15:00,,PT_Normal,,,,,HUlO2rqdRUCI0rghmWTsLg,0X2/+x5V6UOdUSYhvOBElw,,,N,0,0,,,2014-04-13 07:21,2014-04-14 16:04,admin,admin,
3258,143355,6971,40406,7842,0,N,N,N,CP_Phys,TT_Task,DT_FixedDrtn,TK_NotStart,CZA-TK-0511-1960,Erection and Fit-up,8395,2528,0,40,0,0,0,40,80,0,80,,,,2015-05-13 15:00,2015-05-18 15:00,,2014-07-23 07:00,2014-07-27 17:00,2014-07-23 07:00,2014-07-27 17:00,2014-07-23 07:00,2014-07-27 17:00,2015-05-13 15:00,2015-05-18 15:00,,PT_Normal,,,,,p8R0EVoYwUu23khw0vZH7Q,WKZrIMv5TkSaFrSHcxhq8A,,,N,0,0,,,2014-04-13 07:21,2014-04-14 16:04,admin,admin,
3259,143356,6971,40406,7842,0,N,N,N,CP_Phys,TT_Task,DT_FixedDrtn,TK_NotStart,CZA-TK-0511-1970,Welding,8395,2528,0,120,0,0,0,120,240,0,240,,,,2015-05-18 15:00,2015-06-01 15:00,,2014-07-28 07:00,2014-08-10 17:00,2014-07-28 07:00,2014-08-10 17:00,2014-07-28 07:00,2014-08-10 17:00,2015-05-18 15:00,2015-06-01 15:00,,PT_Normal,,,,,ZGKbeJhplk2Q12ix+GFSnQ,6s26YjBC3EK2ovGP/dm7PQ,,,N,0,0,,,2014-04-13 07:21,2014-04-14 16:04,admin,admin,
3260,143357,6971,40406,7842,0,N,N,N,CP_Phys,TT_Task,DT_FixedDrtn,TK_NotStart,CZA-TK-0511-1980,Inspection,8395,2528,0,140,0,0,0,140,0,0,0,,,,2015-05-16 15:00,2015-06-01 15:00,,2014-07-26 07:00,2014-08-10 17:00,2014-07-26 07:00,2014-08-10 17:00,2014-07-26 07:00,2014-08-10 17:00,2015-05-16 15:00,2015-06-01 15:00,,PT_Normal,,,,,zKZuEMj+CU6Qk0WK8/DMVQ,14iATgqxwkW7NUEFgSUDuQ,,,N,0,0,,,2014-04-13 07:21,2014-04-14 16:04,admin,admin,
3261,143358,6971,40407,7842,0,N,N,N,CP_Phys,TT_Task,DT_FixedDrtn,TK_NotStart,CZA-TK-0511-1510,Laying and Fit-up,8395,2528,0,10,0,22.096682,22.096682,10,0,0,0,,,,2015-01-11 15:00,2015-01-12 15:00,,2014-03-23 07:00,2014-03-23 17:00,2014-03-23 07:00,2014-03-23 17:00,2014-03-23 07:00,2014-03-23 17:00,2015-01-11 15:00,2015-01-12 15:00,,PT_Normal,,,,,iuN2UBiwJUmJHxY8tUidDg,gtXdZzf2ikaIyKeAL9eksQ,,,N,0,0,,,2014-04-13 07:21,2014-04-14 16:04,admin,admin,
3262,143359,6971,40407,7842,0,N,N,N,CP_Phys,TT_Task,DT_FixedDrtn,TK_NotStart,CZA-TK-0511-1520,Welding,8395,2528,0,30,0,27.620853,27.620853,30,60,0,60,,,,2015-01-12 15:00,2015-01-15 15:00,,2014-03-24 07:00,2014-03-26 17:00,2014-03-24 07:00,2014-03-26 17:00,2014-03-24 07:00,2014-03-26 17:00,2015-01-12 15:00,2015-01-15 15:00,,PT_Normal,,,,,TRmL6tMn1kuCBYSEsS8orw,cSKc7kpVv0aSTrUI7SNHgw,,,N,0,0,,,2014-04-13 07:21,2014-04-14 16:04,admin,admin,
3263,143360,6971,40407,7842,0,N,N,N,CP_Phys,TT_Task,DT_FixedDrtn,TK_NotStart,CZA-TK-0511-1530,Inspection,8395,2528,0,40,0,5.524171,5.524171,40,0,0,0,,,,2015-01-11 15:00,2015-01-15 15:00,,2014-03-23 07:00,2014-03-26 17:00,2014-03-23 07:00,2014-03-26 17:00,2014-03-23 07:00,2014-03-26 17:00,2015-01-11 15:00,2015-01-15 15:00,,PT_Normal,,,,,tEN26voAQ0GQCo+5BRFl/Q,d77T/vmaLU67s7Q7h+IAQg,,,N,0,0,,,2014-04-13 07:21,2014-04-14 16:04,admin,admin,
3264,143361,6971,40408,7842,0,N,N,N,CP_Phys,TT_Task,DT_FixedDrtn,TK_NotStart,CZA-TK-0511-1540,Erection and Fit-up,8395,2528,0,10,0,47.254461,47.254461,10,0,0,0,,,,2015-01-15 15:00,2015-01-17 15:00,,2014-03-27 07:00,2014-03-27 17:00,2014-03-27 07:00,2014-03-27 17:00,2014-03-27 07:00,2014-03-27 17:00,2015-01-15 15:00,2015-01-17 15:00,,PT_Normal,,,,,ucLAo0K7h0agRkJvckkIrQ,QFSDQxagAkWYr6QeaQIJ7A,,,N,0,0,,,2014-04-13 07:21,2014-04-14 16:04,admin,admin,
3265,143362,6971,40408,7842,0,N,N,N,CP_Phys,TT_Task,DT_FixedDrtn,TK_NotStart,CZA-TK-0511-1550,Welding,8395,2528,0,40,0,59.068076,59.068076,40,80,0,80,,,,2015-01-17 15:00,2015-01-21 15:00,,2014-03-29 07:00,2014-04-01 17:00,2014-03-29 07:00,2014-04-01 17:00,2014-03-29 07:00,2014-04-01 17:00,2015-01-17 15:00,2015-01-21 15:00,,PT_Normal,,,,,var7A73U/0+yvoB7JoyxIQ,SJXPlfSJbE6k6RT7kafhaA,,,N,0,0,,,2014-04-13 07:21,2014-04-14 16:04,admin,admin,
3266,143363,6971,40408,7842,0,N,N,N,CP_Phys,TT_Task,DT_FixedDrtn,TK_NotStart,CZA-TK-0511-1560,Inspection,8395,2528,0,50,0,11.813615,11.813615,50,0,0,0,,,,2015-01-15 15:00,2015-01-21 15:00,,2014-03-27 07:00,2014-04-01 17:00,2014-03-27 07:00,2014-04-01 17:00,2014-03-27 07:00,2014-04-01 17:00,2015-01-15 15:00,2015-01-21 15:00,,PT_Normal,,,,,ooHT6cKwPUCPZ49QOgOewg,f95ceDIknUWUjCjNbNS5OQ,,,N,0,0,,,2014-04-13 07:21,2014-04-14 16:04,admin,admin,
3267,143364,6971,40409,7842,0,N,N,N,CP_Phys,TT_Task,DT_FixedDrtn,TK_NotStart,CZA-TK-0511-1570,Erection and Fit-up,8395,2528,0,10,0,28.463679,28.463679,10,0,0,0,,,,2015-01-21 15:00,2015-01-22 15:00,,2014-04-02 07:00,2014-04-02 17:00,2014-04-02 07:00,2014-04-02 17:00,2014-04-02 07:00,2014-04-02 17:00,2015-01-21 15:00,2015-01-22 15:00,,PT_Normal,,,,,lircXPZzUkaiMMTxUXdHzw,rR8ZEtMN90Wzliq9s1yK/g,,,N,0,0,,,2014-04-13 07:21,2014-04-14 16:04,admin,admin,
3268,143365,6971,40409,7842,0,N,N,N,CP_Phys,TT_Task,DT_FixedDrtn,TK_NotStart,CZA-TK-0511-1580,Welding,8395,2528,0,40,0,35.579598,35.579598,40,80,0,80,,,,2015-01-22 15:00,2015-01-27 15:00,,2014-04-03 07:00,2014-04-07 17:00,2014-04-03 07:00,2014-04-07 17:00,2014-04-03 07:00,2014-04-07 17:00,2015-01-22 15:00,2015-01-27 15:00,,PT_Normal,,,,,IezBNZDlgku+e64RJvDDVg,zXTIDQuJMUKuMrDrRKPEJw,,,N,0,0,,,2014-04-13 07:21,2014-04-14 16:04,admin,admin,
3269,143366,6971,40409,7842,0,N,N,N,CP_Phys,TT_Task,DT_FixedDrtn,TK_NotStart,CZA-TK-0511-1590,Inspection,8395,2528,0,50,0,7.11592,7.11592,50,0,0,0,,,,2015-01-21 15:00,2015-01-27 15:00,,2014-04-02 07:00,2014-04-07 17:00,2014-04-02 07:00,2014-04-07 17:00,2014-04-02 07:00,2014-04-07 17:00,2015-01-21 15:00,2015-01-27 15:00,,PT_Normal,,,,,VI7OcJmw1UObTk6F96DpBQ,4RoAdvnjmku8UmOCwc1qlg,,,N,0,0,,,2014-04-13 07:21,2014-04-14 16:04,admin,admin,
3270,143367,6971,40410,7842,0,N,N,N,CP_Phys,TT_Task,DT_FixedDrtn,TK_NotStart,CZA-TK-0511-1600,Erection and Fit-up,8395,2528,0,10,0,24.053273,24.053273,10,0,0,0,,,,2015-01-27 15:00,2015-01-28 15:00,,2014-04-08 07:00,2014-04-08 17:00,2014-04-08 07:00,2014-04-08 17:00,2014-04-08 07:00,2014-04-08 17:00,2015-01-27 15:00,2015-01-28 15:00,,PT_Normal,,,,,o0p4bNB/fkqFQaStUcmb5g,2CabsRe1D0uEffbrUGjNqA,,,N,0,0,,,2014-04-13 07:21,2014-04-14 16:04,admin,admin,
3271,143368,6971,40410,7842,0,N,N,N,CP_Phys,TT_Task,DT_FixedDrtn,TK_NotStart,CZA-TK-0511-1610,Welding,8395,2528,0,40,0,30.066591,30.066591,40,80,0,80,,,,2015-01-28 15:00,2015-02-02 15:00,,2014-04-09 07:00,2014-04-13 17:00,2014-04-09 07:00,2014-04-13 17:00,2014-04-09 07:00,2014-04-13 17:00,2015-01-28 15:00,2015-02-02 15:00,,PT_Normal,,,,,qquMtpa3oEeZDMCrsCTCdA,yOWnWq9isEqYniBr+YaSzw,,,N,0,0,,,2014-04-13 07:21,2014-04-14 16:04,admin,admin,
3272,143369,6971,40410,7842,0,N,N,N,CP_Phys,TT_Task,DT_FixedDrtn,TK_NotStart,CZA-TK-0511-1620,Inspection,8395,2528,0,50,0,6.013318,6.013318,50,0,0,0,,,,2015-01-27 15:00,2015-02-02 15:00,,2014-04-08 07:00,2014-04-13 17:00,2014-04-08 07:00,2014-04-13 17:00,2014-04-08 07:00,2014-04-13 17:00,2015-01-27 15:00,2015-02-02 15:00,,PT_Normal,,,,,ptXuGG7VX0OfAH1sIJhzvw,X1jonn37MEi2gG0JSnvAzg,,,N,0,0,,,2014-04-13 07:21,2014-04-14 16:04,admin,admin,
3273,143370,6971,39952,7842,0,N,N,N,CP_Phys,TT_Task,DT_FixedDrtn,TK_NotStart,CZA-TK-0511-2000,"Blasting and Painting of Bottom, Shell and Roof (Inside and Outside)",8395,2598,0,40,0,448.171934,448.171934,40,0,0,0,,,,2015-06-15 15:00,2015-06-20 15:00,,2014-08-17 07:00,2014-08-20 17:00,2014-08-17 07:00,2014-08-20 17:00,2014-08-17 07:00,2014-08-20 17:00,2015-06-15 15:00,2015-06-20 15:00,,PT_Normal,,,,,gB5fprjtX0upRtbU+6Aejg,zFrSJ8TsyU++gzx63xwFoQ,,,N,0,0,,,2014-04-13 07:21,2014-04-14 16:04,admin,admin,
3274,143371,6971,39995,7842,0,N,N,N,CP_Phys,TT_Task,DT_FixedDrtn,TK_NotStart,CZA-TK-0510-1640,"Filling, Holding and Draining of Water",8396,2528,0,50,0,746.953223,746.953223,50,0,0,0,,,,2015-06-06 15:00,2015-06-11 15:00,,2014-08-16 07:00,2014-08-20 17:00,2014-08-16 07:00,2014-08-20 17:00,2014-08-16 07:00,2014-08-20 17:00,2015-06-06 15:00,2015-06-11 15:00,,PT_Normal,,,,,3c6qSoPMTky2iHjR15R5yQ,,,,N,0,0,,,2014-04-13 07:21,2014-04-14 16:04,admin,admin,
3275,143372,6971,39996,7842,0,N,N,N,CP_Phys,TT_Task,DT_FixedDrtn,TK_NotStart,CZA-TK-0510-1660,Tank Calibration,8396,2528,0,50,0,149.390645,149.390645,50,0,0,0,,,,2015-06-20 15:00,2015-06-25 15:00,,2014-08-30 07:00,2014-09-03 17:00,2014-08-30 07:00,2014-09-03 17:00,2014-08-30 07:00,2014-09-03 17:00,2015-06-20 15:00,2015-06-25 15:00,,PT_Normal,,,,,l4gzSZIJS0+0KjYs2FvCYQ,,,,N,0,0,,,2014-04-13 07:21,2014-04-14 16:04,admin,admin,
3276,143373,6971,39996,7842,0,N,N,N,CP_Phys,TT_Task,DT_FixedDrtn,TK_NotStart,CZA-TK-0510-1670,Tank Handover,8396,2528,2528,20,0,149.390645,149.390645,20,0,0,0,,,,2015-06-25 15:00,2015-06-28 15:00,,2014-09-04 07:00,2014-09-06 17:00,2014-09-04 07:00,2014-09-06 17:00,2014-09-04 07:00,2014-09-06 17:00,2015-06-25 15:00,2015-06-28 15:00,,PT_Normal,,,,,vyHd0Lgnr0OjK0U7FXh8Ug,,,,N,0,0,,,2014-04-13 07:21,2014-04-14 16:04,admin,admin,
3277,143374,6971,39997,7842,0,N,N,N,CP_Phys,TT_Task,DT_FixedDrtn,TK_NotStart,CZA-TK-0510-1000,Cutting of Annular Plate,8501,2906,0,10,0,50.475,50.475,10,0,0,0,,,,2014-12-02 13:00,2014-12-03 13:00,,2013-12-29 07:00,2013-12-29 17:00,2013-12-29 07:00,2013-12-29 17:00,2013-12-29 07:00,2013-12-29 17:00,2014-12-02 13:00,2014-12-03 13:00,,PT_Normal,,,,,PB+gdHhxTUiu1/bHoeQb0Q,,,,N,0,0,,,2014-04-13 07:21,2014-04-14 17:03,admin,admin,
3278,143375,6971,39997,7842,0,N,N,N,CP_Phys,TT_Task,DT_FixedDrtn,TK_NotStart,CZA-TK-0510-1010,Cutting of Bottom Plates,8501,3909.5,0,10,0,107.9424,107.9424,10,0,0,0,,,,2015-03-30 16:30,2015-03-31 16:30,,2013-12-30 07:00,2013-12-30 17:00,2013-12-30 07:00,2013-12-30 17:00,2013-12-30 07:00,2013-12-30 17:00,2015-03-30 16:30,2015-03-31 16:30,,PT_Normal,,,,,rjRVBvR4kEudytwTUPitTQ,,,,N,0,0,,,2014-04-13 07:21,2014-04-14 17:03,admin,admin,
3279,143376,6971,39997,7842,0,N,N,N,CP_Phys,TT_Task,DT_FixedDrtn,TK_NotStart,CZA-TK-0510-1020,"Cutting, Bevelling & Rolling of Shell No.1",8501,3909.5,0,10,0,65.019,65.019,10,0,0,0,,,,2015-03-31 16:30,2015-04-01 16:30,,2013-12-31 07:00,2013-12-31 17:00,2013-12-31 07:00,2013-12-31 17:00,2013-12-31 07:00,2013-12-31 17:00,2015-03-31 16:30,2015-04-01 16:30,,PT_Normal,,,,,bZeDeKkz5EacetvxV5iPzQ,,,,N,0,0,,,2014-04-13 07:21,2014-04-14 17:03,admin,admin,
3280,143377,6971,39997,7842,0,N,N,N,CP_Phys,TT_Task,DT_FixedDrtn,TK_NotStart,CZA-TK-0510-1030,"Cutting, Bevelling & Rolling of Shell No.2",8501,3909.5,0,10,0,54.9444,54.9444,10,0,0,0,,,,2015-04-01 16:30,2015-04-02 16:30,,2014-01-01 07:00,2014-01-01 17:00,2014-01-01 07:00,2014-01-01 17:00,2014-01-01 07:00,2014-01-01 17:00,2015-04-01 16:30,2015-04-02 16:30,,PT_Normal,,,,,7RXeESlkFkqnkIB5LQjpSw,,,,N,0,0,,,2014-04-13 07:21,2014-04-14 17:03,admin,admin,
3281,143378,6971,39997,7842,0,N,N,N,CP_Phys,TT_Task,DT_FixedDrtn,TK_NotStart,CZA-TK-0510-1040,"Cutting, Fit-up and Welding of Shell Nozzles,Manholes and Other Appurtanances",8501,3909.5,0,30,0,0,0,30,0,0,0,,,,2015-04-02 16:30,2015-04-06 16:30,,2014-01-02 07:00,2014-01-05 17:00,2014-01-02 07:00,2014-01-05 17:00,2014-01-02 07:00,2014-01-05 17:00,2015-04-02 16:30,2015-04-06 16:30,,PT_Normal,,,,,WWRF7SAk8U6cLLE14gppYg,,,,N,0,0,,,2014-04-13 07:21,2014-04-14 17:03,admin,admin,
3282,143379,6971,39997,7842,0,N,N,N,CP_Phys,TT_Task,DT_FixedDrtn,TK_NotStart,CZA-TK-0510-1050,"Cutting, Bevelling & Rolling of Shell No.3",8501,3909.5,0,10,0,0,0,10,0,0,0,,,,2015-04-06 16:30,2015-04-07 16:30,,2014-01-06 07:00,2014-01-06 17:00,2014-01-06 07:00,2014-01-06 17:00,2014-01-06 07:00,2014-01-06 17:00,2015-04-06 16:30,2015-04-07 16:30,,PT_Normal,,,,,xRHuef3rl0K2iF26YTcU4Q,,,,N,0,0,,,2014-04-13 07:21,2014-04-14 17:03,admin,admin,
3283,143380,6971,39997,7842,0,N,N,N,CP_Phys,TT_Task,DT_FixedDrtn,TK_NotStart,CZA-TK-0510-1060,"Cutting, Bevelling & Rolling of Shell No.4",8501,3909.5,0,10,0,0,0,10,0,0,0,,,,2015-04-07 16:30,2015-04-08 16:30,,2014-01-07 07:00,2014-01-07 17:00,2014-01-07 07:00,2014-01-07 17:00,2014-01-07 07:00,2014-01-07 17:00,2015-04-07 16:30,2015-04-08 16:30,,PT_Normal,,,,,dnS0sOfUpUmVXTSPA5cbGQ,,,,N,0,0,,,2014-04-13 07:21,2014-04-14 17:03,admin,admin,
3284,143381,6971,39997,7842,0,N,N,N,CP_Phys,TT_Task,DT_FixedDrtn,TK_NotStart,CZA-TK-0510-1070,"Cutting, Bevelling & Rolling of Shell No.5",8501,3909.5,0,10,0,69.7632,69.7632,10,0,0,0,,,,2015-04-08 16:30,2015-04-09 16:30,,2014-01-08 07:00,2014-01-08 17:00,2014-01-08 07:00,2014-01-08 17:00,2014-01-08 07:00,2014-01-08 17:00,2015-04-08 16:30,2015-04-09 16:30,,PT_Normal,,,,,C+XzM5DRSEidzShapg1LIQ,,,,N,0,0,,,2014-04-13 07:21,2014-04-14 17:03,admin,admin,
3285,143382,6971,39997,7842,0,N,N,N,CP_Phys,TT_Task,DT_FixedDrtn,TK_NotStart,CZA-TK-0510-1080,"Cutting, Bevelling & Rolling of Shell No.6",8501,3909.5,0,10,0,41.2416,41.2416,10,0,0,0,,,,2015-04-09 16:30,2015-04-11 16:30,,2014-01-09 07:00,2014-01-09 17:00,2014-01-09 07:00,2014-01-09 17:00,2014-01-09 07:00,2014-01-09 17:00,2015-04-09 16:30,2015-04-11 16:30,,PT_Normal,,,,,D7JmXH9aBE+nL9BEuBGH3Q,,,,N,0,0,,,2014-04-13 07:21,2014-04-14 17:03,admin,admin,
3286,143383,6971,39997,7842,0,N,N,N,CP_Phys,TT_Task,DT_FixedDrtn,TK_NotStart,CZA-TK-0510-1090,"Cutting, Bevelling & Rolling of Curb Angle",8501,3909.5,0,20,0,14.775,14.775,20,0,0,0,,,,2015-04-11 16:30,2015-04-13 16:30,,2014-01-11 07:00,2014-01-12 17:00,2014-01-11 07:00,2014-01-12 17:00,2014-01-11 07:00,2014-01-12 17:00,2015-04-11 16:30,2015-04-13 16:30,,PT_Normal,,,,,V9qcqyKpdU6Vr6wUx47siA,,,,N,0,0,,,2014-04-13 07:21,2014-04-14 17:03,admin,admin,
3287,143384,6971,39997,7842,0,N,N,N,CP_Phys,TT_Task,DT_FixedDrtn,TK_NotStart,CZA-TK-0510-1100,"Cutting, Bevelling & Rolling of Roof Structure",8501,3909.5,0,50,0,75,75,50,0,0,0,,,,2015-04-13 16:30,2015-04-19 16:30,,2014-01-13 07:00,2014-01-18 17:00,2014-01-13 07:00,2014-01-18 17:00,2014-01-13 07:00,2014-01-18 17:00,2015-04-13 16:30,2015-04-19 16:30,,PT_Normal,,,,,ySFWWStclUK2iqJnZRPIfA,,,,N,0,0,,,2014-04-13 07:21,2014-04-14 17:03,admin,admin,
3288,143385,6971,39997,7842,0,N,N,N,CP_Phys,TT_Task,DT_FixedDrtn,TK_NotStart,CZA-TK-0510-1110,Cutting of Roof Plates,8501,3909.5,0,12.5,0,133.6242,133.6242,12.5,0,0,0,,,,2015-04-19 16:30,2015-04-21 09:00,,2014-01-19 07:00,2014-01-20 09:30,2014-01-19 07:00,2014-01-20 09:30,2014-01-19 07:00,2014-01-20 09:30,2015-04-19 16:30,2015-04-21 09:00,,PT_Normal,,,,,fUmbbQ9JdkeRS4rcSyiXpw,,,,N,0,0,,,2014-04-13 07:21,2014-04-14 17:03,admin,admin,
3289,143386,6971,39997,7842,0,N,N,N,CP_Phys,TT_Task,DT_FixedDrtn,TK_NotStart,CZA-TK-0510-1120,"Cutting,Fit-up and Welding of Roof Nozzles, Manholes & Other Appurtanances",8501,3909.5,0,70,0,0,0,70,0,0,0,,,,2015-04-21 09:00,2015-04-29 09:00,,2014-01-20 09:30,2014-01-28 09:30,2014-01-20 09:30,2014-01-28 09:30,2014-01-20 09:30,2014-01-28 09:30,2015-04-21 09:00,2015-04-29 09:00,,PT_Normal,,,,,HnbFtKmLdUuMkWZ/3YUTmg,,,,N,0,0,,,2014-04-13 07:21,2014-04-14 17:03,admin,admin,
3290,143387,6971,39997,7842,0,N,N,N,CP_Phys,TT_Task,DT_FixedDrtn,TK_NotStart,CZA-TK-0510-1130,"Cutting, Fit-up & Welding  of Roof Platform, Gratings and Handrails",8501,3909.5,0,100,0,0,0,100,0,0,0,,,,2015-04-22 15:00,2015-05-04 15:00,,2014-01-21 15:30,2014-02-02 15:30,2014-01-21 15:30,2014-02-02 15:30,2014-01-21 15:30,2014-02-02 15:30,2015-04-22 15:00,2015-05-04 15:00,,PT_Normal,,,,,yj/RMuUz/0S+tVO7j1nAJQ,,,,N,0,0,,,2014-04-13 07:21,2014-04-14 17:03,admin,admin,
3291,143388,6971,39997,7842,0,N,N,N,CP_Phys,TT_Task,DT_FixedDrtn,TK_NotStart,CZA-TK-0510-1140,"Cutting, Fit-up and Welding of Stairway Platfrom, Gratings and Handrails",8501,3909.5,1261.5,100,0,0,0,100,0,0,0,,,,2015-04-22 15:00,2015-05-04 15:00,,2014-01-21 15:30,2014-02-02 15:30,2014-01-21 15:30,2014-02-02 15:30,2014-01-21 15:30,2014-02-02 15:30,2015-04-22 15:00,2015-05-04 15:00,,PT_Normal,,,,,7RDhftNO0kapHxO0Xorsyg,,,,N,0,0,,,2014-04-13 07:21,2014-04-14 17:03,admin,admin,
3292,143389,6971,39998,7842,0,N,N,N,CP_Phys,TT_Mile,DT_FixedDrtn,TK_NotStart,CZA-TK-0510-1150,Foundation Takeover from Client,,0,0,0,0,0,0,0,0,0,0,2014-03-23 00:00,,,2014-03-22 17:00,2014-03-22 17:00,,2014-03-23 07:00,2014-03-23 07:00,2014-03-23 07:00,2014-03-23 07:00,2014-03-23 07:00,2014-03-23 07:00,2014-03-22 17:00,2014-03-22 17:00,CS_MSO,PT_Normal,,,,,2h6bghOiWkmdHQdC5dF72w,,,,N,0,0,,,2014-04-13 07:21,2014-04-13 07:42,admin,admin,
3293,143390,6971,40418,7842,0,N,N,N,CP_Phys,TT_Task,DT_FixedDrtn,TK_NotStart,CZA-TK-0510-1160,Laying and Fit-up,8396,2648,0,10,0,22.096682,22.096682,10,0,0,0,,,,2015-01-25 15:00,2015-01-26 15:00,,2014-03-23 07:00,2014-03-23 17:00,2014-03-23 07:00,2014-03-23 17:00,2014-03-23 07:00,2014-03-23 17:00,2015-01-25 15:00,2015-01-26 15:00,,PT_Normal,,,,,vIHTiX6gWkWNT9w+cJTQPA,AV28rEKcnUe/cxk6PAl+XQ,,,N,0,0,,,2014-04-13 07:21,2014-04-14 16:04,admin,admin,
3294,143391,6971,40418,7842,0,N,N,N,CP_Phys,TT_Task,DT_FixedDrtn,TK_NotStart,CZA-TK-0510-1170,Welding,8396,2648,0,30,0,27.620853,27.620853,30,60,0,60,,,,2015-01-26 15:00,2015-01-29 15:00,,2014-03-24 07:00,2014-03-26 17:00,2014-03-24 07:00,2014-03-26 17:00,2014-03-24 07:00,2014-03-26 17:00,2015-01-26 15:00,2015-01-29 15:00,,PT_Normal,,,,,L4pKpwlnF0C9TJPBoHW4iw,zl55MCgaskSoESRALQ6cAg,,,N,0,0,,,2014-04-13 07:21,2014-04-14 16:04,admin,admin,
3295,143392,6971,40418,7842,0,N,N,N,CP_Phys,TT_Task,DT_FixedDrtn,TK_NotStart,CZA-TK-0510-1180,Inspection,8396,2648,0,40,0,5.524171,5.524171,40,0,0,0,,,,2015-01-25 15:00,2015-01-29 15:00,,2014-03-23 07:00,2014-03-26 17:00,2014-03-23 07:00,2014-03-26 17:00,2014-03-23 07:00,2014-03-26 17:00,2015-01-25 15:00,2015-01-29 15:00,,PT_Normal,,,,,la11jD9oBEKKicC3EvMEYQ,TezNFT+1CEqYwCoRfQ5BRQ,,,N,0,0,,,2014-04-13 07:21,2014-04-14 16:04,admin,admin,
3296,143393,6971,40628,7842,0,N,N,N,CP_Phys,TT_Task,DT_FixedDrtn,TK_NotStart,CZA-TK-0510-1400,Erection and Fit-up,8396,2648,0,10,0,18.054532,18.054532,10,20,0,20,,,,2015-03-15 15:00,2015-03-16 15:00,,2014-05-11 07:00,2014-05-11 17:00,2014-05-11 07:00,2014-05-11 17:00,2014-05-11 07:00,2014-05-11 17:00,2015-03-15 15:00,2015-03-16 15:00,,PT_Normal,,,,,++lGmlOr6EGP4i2XxFzgBA,8kBwrnNdzk6Wzz7TeWuiCA,,,N,0,0,,,2014-04-13 07:21,2014-04-14 16:04,admin,admin,
3297,143394,6971,40628,7842,0,N,N,N,CP_Phys,TT_Task,DT_FixedDrtn,TK_NotStart,CZA-TK-0510-1410,Welding,8396,2648,0,40,0,22.568166,22.568166,40,80,0,80,,,,2015-03-16 15:00,2015-03-21 15:00,,2014-05-12 07:00,2014-05-15 17:00,2014-05-12 07:00,2014-05-15 17:00,2014-05-12 07:00,2014-05-15 17:00,2015-03-16 15:00,2015-03-21 15:00,,PT_Normal,,,,,cvfjpu8iP029+FbrGhv7Qw,Yg68DQDTRUiDJJlW+2zFTQ,,,N,0,0,,,2014-04-13 07:21,2014-04-14 16:04,admin,admin,
3298,143395,6971,40628,7842,0,N,N,N,CP_Phys,TT_Task,DT_FixedDrtn,TK_NotStart,CZA-TK-0510-1420,Inspection,8396,2648,0,50,0,4.513633,4.513633,50,0,0,0,,,,2015-03-15 15:00,2015-03-21 15:00,,2014-05-11 07:00,2014-05-15 17:00,2014-05-11 07:00,2014-05-15 17:00,2014-05-11 07:00,2014-05-15 17:00,2015-03-15 15:00,2015-03-21 15:00,,PT_Normal,,,,,phST8z89D06lBNZGyZZQ4A,Mr83KBmKBUuM/FAhFMtNzQ,,,N,0,0,,,2014-04-13 07:21,2014-04-14 16:04,admin,admin,
3299,143396,6971,40629,7842,0,N,N,N,CP_Phys,TT_Task,DT_FixedDrtn,TK_NotStart,CZA-TK-0510-1430,"Cutting, Installation and Fit-up",8396,2648,0,20,0,0,0,20,40,0,40,,,,2015-03-21 15:00,2015-03-23 15:00,,2014-05-17 07:00,2014-05-18 17:00,2014-05-17 07:00,2014-05-18 17:00,2014-05-17 07:00,2014-05-18 17:00,2015-03-21 15:00,2015-03-23 15:00,,PT_Normal,,,,,Ss9E5XRdxUmNLoF0v9Xwog,iBMU5a2BJ0aB1wiIXUj11Q,,,N,0,0,,,2014-04-13 07:21,2014-04-14 16:04,admin,admin,
3300,143397,6971,40629,7842,0,N,N,N,CP_Phys,TT_Task,DT_FixedDrtn,TK_NotStart,CZA-TK-0510-1440,Welding,8396,2648,0,50,0,0,0,50,100,0,100,,,,2015-03-23 15:00,2015-03-29 15:00,,2014-05-19 07:00,2014-05-24 17:00,2014-05-19 07:00,2014-05-24 17:00,2014-05-19 07:00,2014-05-24 17:00,2015-03-23 15:00,2015-03-29 15:00,,PT_Normal,,,,,Uq0dxjTq1kK2kfnCGGytXA,zuopx/If2USAhbvKN6dq+A,,,N,0,0,,,2014-04-13 07:21,2014-04-14 16:04,admin,admin,
3301,143398,6971,40629,7842,0,N,N,N,CP_Phys,TT_Task,DT_FixedDrtn,TK_NotStart,CZA-TK-0510-1450,Inspection,8396,2648,0,70,0,0,0,70,0,0,0,,,,2015-03-21 15:00,2015-03-29 15:00,,2014-05-17 07:00,2014-05-24 17:00,2014-05-17 07:00,2014-05-24 17:00,2014-05-17 07:00,2014-05-24 17:00,2015-03-21 15:00,2015-03-29 15:00,,PT_Normal,,,,,up000A1Y00+IJNI/Dv5JsQ,Z0VgQ2TvsEakGHQP1dmQGA,,,N,0,0,,,2014-04-13 07:21,2014-04-14 16:04,admin,admin,
3302,143399,6971,40630,7842,0,N,N,N,CP_Phys,TT_Task,DT_FixedDrtn,TK_NotStart,CZA-TK-0510-1460,Erection and Fit-up,8396,2648,0,10,0,6.468122,6.468122,10,0,0,0,,,,2015-03-29 15:00,2015-03-30 15:00,,2014-05-25 07:00,2014-05-25 17:00,2014-05-25 07:00,2014-05-25 17:00,2014-05-25 07:00,2014-05-25 17:00,2015-03-29 15:00,2015-03-30 15:00,,PT_Normal,,,,,OEtLUWnY3UCPt79w9XbU6A,knZTOE+jeUaxLgTiiiq32w,,,N,0,0,,,2014-04-13 07:21,2014-04-14 16:04,admin,admin,
3303,143400,6971,40630,7842,0,N,N,N,CP_Phys,TT_Task,DT_FixedDrtn,TK_NotStart,CZA-TK-0510-1470,Welding,8396,2648,0,20,0,8.085153,8.085153,20,40,0,40,,,,2015-03-30 15:00,2015-04-01 15:00,,2014-05-26 07:00,2014-05-27 17:00,2014-05-26 07:00,2014-05-27 17:00,2014-05-26 07:00,2014-05-27 17:00,2015-03-30 15:00,2015-04-01 15:00,,PT_Normal,,,,,hrgSHnDcxUqZUuiB2AyeCQ,JhnNHwADCEqH3nRE53ChvA,,,N,0,0,,,2014-04-13 07:21,2014-04-14 16:04,admin,admin,
3304,143401,6971,40630,7842,0,N,N,N,CP_Phys,TT_Task,DT_FixedDrtn,TK_NotStart,CZA-TK-0510-1480,Inspection,8396,2648,0,30,0,1.617031,1.617031,30,0,0,0,,,,2015-03-29 15:00,2015-04-01 15:00,,2014-05-25 07:00,2014-05-27 17:00,2014-05-25 07:00,2014-05-27 17:00,2014-05-25 07:00,2014-05-27 17:00,2015-03-29 15:00,2015-04-01 15:00,,PT_Normal,,,,,kuGBzX6Km0ywmqwPK++EqQ,obVUWvweZ062NnVnTyz4Xw,,,N,0,0,,,2014-04-13 07:21,2014-04-14 16:04,admin,admin,
3305,143402,6971,40631,7842,0,N,N,N,CP_Phys,TT_Task,DT_FixedDrtn,TK_NotStart,CZA-TK-0510-1220,Erection and Fit-up,8396,2648,0,10,0,28.463679,28.463679,10,0,0,0,,,,2015-02-04 15:00,2015-02-05 15:00,,2014-04-02 07:00,2014-04-02 17:00,2014-04-02 07:00,2014-04-02 17:00,2014-04-02 07:00,2014-04-02 17:00,2015-02-04 15:00,2015-02-05 15:00,,PT_Normal,,,,,+K6EuRP1KEOzkauhug3OYg,LTNX/4Z6PEGH17Fz/nGuHQ,,,N,0,0,,,2014-04-13 07:21,2014-04-14 16:04,admin,admin,
3306,143403,6971,40631,7842,0,N,N,N,CP_Phys,TT_Task,DT_FixedDrtn,TK_NotStart,CZA-TK-0510-1230,Welding,8396,2648,0,40,0,35.579598,35.579598,40,80,0,80,,,,2015-02-05 15:00,2015-02-10 15:00,,2014-04-03 07:00,2014-04-07 17:00,2014-04-03 07:00,2014-04-07 17:00,2014-04-03 07:00,2014-04-07 17:00,2015-02-05 15:00,2015-02-10 15:00,,PT_Normal,,,,,cbUXZcVWq0SKNA6xgGdjGg,1Aq8yP14+US9WntfLMKzwg,,,N,0,0,,,2014-04-13 07:21,2014-04-14 16:04,admin,admin,
3307,143404,6971,40631,7842,0,N,N,N,CP_Phys,TT_Task,DT_FixedDrtn,TK_NotStart,CZA-TK-0510-1240,Inspection,8396,2648,0,50,0,7.11592,7.11592,50,0,0,0,,,,2015-02-04 15:00,2015-02-10 15:00,,2014-04-02 07:00,2014-04-07 17:00,2014-04-02 07:00,2014-04-07 17:00,2014-04-02 07:00,2014-04-07 17:00,2015-02-04 15:00,2015-02-10 15:00,,PT_Normal,,,,,N5myXWcJQE64UZIYxZfa5g,UMd1EBOY60i4xB0vosSR8g,,,N,0,0,,,2014-04-13 07:21,2014-04-14 16:04,admin,admin,
3308,143405,6971,40632,7842,0,N,N,N,CP_Phys,TT_Task,DT_FixedDrtn,TK_NotStart,CZA-TK-0510-1250,Erection and Fit-up,8396,2648,0,10,0,24.053273,24.053273,10,0,0,0,,,,2015-02-10 15:00,2015-02-11 15:00,,2014-04-08 07:00,2014-04-08 17:00,2014-04-08 07:00,2014-04-08 17:00,2014-04-08 07:00,2014-04-08 17:00,2015-02-10 15:00,2015-02-11 15:00,,PT_Normal,,,,,HDvBnSjyU0K1Go96Mzaz7g,nlpD+N/8o021eu6/EykLLA,,,N,0,0,,,2014-04-13 07:21,2014-04-14 16:04,admin,admin,
3309,143406,6971,40632,7842,0,N,N,N,CP_Phys,TT_Task,DT_FixedDrtn,TK_NotStart,CZA-TK-0510-1260,Welding,8396,2648,0,40,0,30.066591,30.066591,40,80,0,80,,,,2015-02-11 15:00,2015-02-16 15:00,,2014-04-09 07:00,2014-04-13 17:00,2014-04-09 07:00,2014-04-13 17:00,2014-04-09 07:00,2014-04-13 17:00,2015-02-11 15:00,2015-02-16 15:00,,PT_Normal,,,,,rW2sJRQwV0azT+yAwyWSOA,3/VwpHqByk2ZOBrL92eM/Q,,,N,0,0,,,2014-04-13 07:21,2014-04-14 16:04,admin,admin,
3310,143407,6971,40632,7842,0,N,N,N,CP_Phys,TT_Task,DT_FixedDrtn,TK_NotStart,CZA-TK-0510-1270,Inspection,8396,2648,0,50,0,6.013318,6.013318,50,0,0,0,,,,2015-02-10 15:00,2015-02-16 15:00,,2014-04-08 07:00,2014-04-13 17:00,2014-04-08 07:00,2014-04-13 17:00,2014-04-08 07:00,2014-04-13 17:00,2015-02-10 15:00,2015-02-16 15:00,,PT_Normal,,,,,bM4TeoyATUeSDmyA+Rovdw,qN88I5i/NkyJySoi2tX15w,,,N,0,0,,,2014-04-13 07:21,2014-04-14 16:04,admin,admin,
3311,143408,6971,40633,7842,0,N,N,N,CP_Phys,TT_Task,DT_FixedDrtn,TK_NotStart,CZA-TK-0510-1280,"Cutting, Installation and Fit-up",8396,2648,0,20,0,0,0,20,40,0,40,,,,2015-02-16 15:00,2015-02-18 15:00,,2014-04-14 07:00,2014-04-15 17:00,2014-04-14 07:00,2014-04-15 17:00,2014-04-14 07:00,2014-04-15 17:00,2015-02-16 15:00,2015-02-18 15:00,,PT_Normal,,,,,JvKzTPwDpkqDTrSWWX1BdA,amaxmUXF90CH+jgQSV1Mpg,,,N,0,0,,,2014-04-13 07:21,2014-04-14 16:04,admin,admin,
3312,143409,6971,40633,7842,0,N,N,N,CP_Phys,TT_Task,DT_FixedDrtn,TK_NotStart,CZA-TK-0510-1290,Welding,8396,2648,0,60,0,0,0,60,120,0,120,,,,2015-02-18 15:00,2015-02-25 15:00,,2014-04-16 07:00,2014-04-22 17:00,2014-04-16 07:00,2014-04-22 17:00,2014-04-16 07:00,2014-04-22 17:00,2015-02-18 15:00,2015-02-25 15:00,,PT_Normal,,,,,Q0dZTjaeZEii6/nIaoiClQ,gC6nTm5RPU61XKTKt6Fx8w,,,N,0,0,,,2014-04-13 07:21,2014-04-14 16:04,admin,admin,
3313,143410,6971,40633,7842,0,N,N,N,CP_Phys,TT_Task,DT_FixedDrtn,TK_NotStart,CZA-TK-0510-1300,Inspection,8396,2648,0,80,0,0,0,80,0,0,0,,,,2015-02-16 15:00,2015-02-25 15:00,,2014-04-14 07:00,2014-04-22 17:00,2014-04-14 07:00,2014-04-22 17:00,2014-04-14 07:00,2014-04-22 17:00,2015-02-16 15:00,2015-02-25 15:00,,PT_Normal,,,,,AH2D8QJQ6UalZr9z3LgnmA,Uz0lsHGMRESxRv95KJPQuQ,,,N,0,0,,,2014-04-13 07:21,2014-04-14 16:04,admin,admin,
3314,143411,6971,40425,7842,0,N,N,N,CP_Phys,TT_Task,DT_FixedDrtn,TK_NotStart,CZA-TK-0510-1310,Erection and Fit-up,8396,2648,0,10,0,0,0,10,20,0,20,,,,2015-02-25 15:00,2015-02-26 15:00,,2014-04-23 07:00,2014-04-23 17:00,2014-04-23 07:00,2014-04-23 17:00,2014-04-23 07:00,2014-04-23 17:00,2015-02-25 15:00,2015-02-26 15:00,,PT_Normal,,,,,f99+sUr5wkOY75zN3172Tg,iSYi8/nbAkCVjoIbKJG4NQ,,,N,0,0,,,2014-04-13 07:21,2014-04-14 16:04,admin,admin,
3315,143412,6971,40425,7842,0,N,N,N,CP_Phys,TT_Task,DT_FixedDrtn,TK_NotStart,CZA-TK-0510-1320,Welding,8396,2648,0,40,0,0,0,40,80,0,80,,,,2015-02-26 15:00,2015-03-03 15:00,,2014-04-24 07:00,2014-04-28 17:00,2014-04-24 07:00,2014-04-28 17:00,2014-04-24 07:00,2014-04-28 17:00,2015-02-26 15:00,2015-03-03 15:00,,PT_Normal,,,,,mt+On98lYEOQ0OE1m7Ow+g,EWEl1pWsd0CdU3tQVgL92A,,,N,0,0,,,2014-04-13 07:21,2014-04-14 16:04,admin,admin,
3316,143413,6971,40425,7842,0,N,N,N,CP_Phys,TT_Task,DT_FixedDrtn,TK_NotStart,CZA-TK-0510-1330,Inspection,8396,2648,0,50,0,0,0,50,0,0,0,,,,2015-02-25 15:00,2015-03-03 15:00,,2014-04-23 07:00,2014-04-28 17:00,2014-04-23 07:00,2014-04-28 17:00,2014-04-23 07:00,2014-04-28 17:00,2015-02-25 15:00,2015-03-03 15:00,,PT_Normal,,,,,5ncZrC5cgEmStWeKwbc62A,VpQqLeZYKUqYFD0AttyKrw,,,N,0,0,,,2014-04-13 07:21,2014-04-14 16:04,admin,admin,
3317,143414,6971,40426,7842,0,N,N,N,CP_Phys,TT_Task,DT_FixedDrtn,TK_NotStart,CZA-TK-0510-1360,Inspection,8396,2648,0,50,0,0,0,50,0,0,0,,,,2015-03-03 15:00,2015-03-09 15:00,,2014-04-29 07:00,2014-05-04 17:00,2014-04-29 07:00,2014-05-04 17:00,2014-04-29 07:00,2014-05-04 17:00,2015-03-03 15:00,2015-03-09 15:00,,PT_Normal,,,,,ty1sV9PsqUaUekIZVQ25oA,kE3kyslRkkGeTqkQ+/cqjQ,,,N,0,0,,,2014-04-13 07:21,2014-04-14 16:04,admin,admin,
3318,143415,6971,40426,7842,0,N,N,N,CP_Phys,TT_Task,DT_FixedDrtn,TK_NotStart,CZA-TK-0510-1350,Welding,8396,2648,0,40,0,0,0,40,80,0,80,,,,2015-03-04 15:00,2015-03-09 15:00,,2014-04-30 07:00,2014-05-04 17:00,2014-04-30 07:00,2014-05-04 17:00,2014-04-30 07:00,2014-05-04 17:00,2015-03-04 15:00,2015-03-09 15:00,,PT_Normal,,,,,j87vdUEEoESbbRhpcf5NIA,Hqa7bAOaAkKeV4nNcb5Btg,,,N,0,0,,,2014-04-13 07:21,2014-04-14 16:04,admin,admin,
3319,143416,6971,40426,7842,0,N,N,N,CP_Phys,TT_Task,DT_FixedDrtn,TK_NotStart,CZA-TK-0510-1340,Erection and Fit-up,8396,2648,0,10,0,0,0,10,20,0,20,,,,2015-03-03 15:00,2015-03-04 15:00,,2014-04-29 07:00,2014-04-29 17:00,2014-04-29 07:00,2014-04-29 17:00,2014-04-29 07:00,2014-04-29 17:00,2015-03-03 15:00,2015-03-04 15:00,,PT_Normal,,,,,KfeMx/j4AU+3MfkyAsBfhg,LQEewWVYb0GUZ+JT6/37dg,,,N,0,0,,,2014-04-13 07:21,2014-04-14 16:04,admin,admin,
3320,143417,6971,40427,7842,0,N,N,N,CP_Phys,TT_Task,DT_FixedDrtn,TK_NotStart,CZA-TK-0510-1370,Erection and Fit-up,8396,2648,0,10,0,30.54057,30.54057,10,20,0,20,,,,2015-03-09 15:00,2015-03-10 15:00,,2014-05-05 07:00,2014-05-05 17:00,2014-05-05 07:00,2014-05-05 17:00,2014-05-05 07:00,2014-05-05 17:00,2015-03-09 15:00,2015-03-10 15:00,,PT_Normal,,,,,vPCNLfCunE2N0fGmKtMOWw,fXSF2GkkpUuyrhNCWbk4/Q,,,N,0,0,,,2014-04-13 07:21,2014-04-14 16:04,admin,admin,
3321,143418,6971,40427,7842,0,N,N,N,CP_Phys,TT_Task,DT_FixedDrtn,TK_NotStart,CZA-TK-0510-1380,Welding,8396,2648,0,40,0,38.175712,38.175712,40,80,0,80,,,,2015-03-10 15:00,2015-03-15 15:00,,2014-05-06 07:00,2014-05-10 17:00,2014-05-06 07:00,2014-05-10 17:00,2014-05-06 07:00,2014-05-10 17:00,2015-03-10 15:00,2015-03-15 15:00,,PT_Normal,,,,,fE02AefpdE6AKlO5+bPJaw,4z0pU55zxUq+wKvHEZHq1g,,,N,0,0,,,2014-04-13 07:21,2014-04-14 16:04,admin,admin,
3322,143419,6971,40427,7842,0,N,N,N,CP_Phys,TT_Task,DT_FixedDrtn,TK_NotStart,CZA-TK-0510-1390,Inspection,8396,2648,0,50,0,7.635142,7.635142,50,0,0,0,,,,2015-03-09 15:00,2015-03-15 15:00,,2014-05-05 07:00,2014-05-10 17:00,2014-05-05 07:00,2014-05-10 17:00,2014-05-05 07:00,2014-05-10 17:00,2015-03-09 15:00,2015-03-15 15:00,,PT_Normal,,,,,RyObTMMN3Ump4cc9jkG6ig,41A1jr6eAkqt0olyws1qWA,,,N,0,0,,,2014-04-13 07:21,2014-04-14 16:04,admin,admin,
3323,143420,6971,40428,7842,0,N,N,N,CP_Phys,TT_Task,DT_FixedDrtn,TK_NotStart,CZA-TK-0510-1490,Laying and Fit-up,8396,2648,0,20,0,32.833109,32.833109,20,40,0,40,,,,2015-04-01 15:00,2015-04-04 15:00,,2014-05-28 07:00,2014-05-29 17:00,2014-05-28 07:00,2014-05-29 17:00,2014-05-28 07:00,2014-05-29 17:00,2015-04-01 15:00,2015-04-04 15:00,,PT_Normal,,,,,66qZpar9p0WC0OUBKNgYGA,8J1A6VdJb0O6E/Rr/cFlRA,,,N,0,0,,,2014-04-13 07:21,2014-04-14 16:04,admin,admin,
3324,143421,6971,40428,7842,0,N,N,N,CP_Phys,TT_Task,DT_FixedDrtn,TK_NotStart,CZA-TK-0510-1500,Welding,8396,2648,0,50,0,41.041386,41.041386,50,100,0,100,,,,2015-04-04 15:00,2015-04-09 15:00,,2014-05-31 07:00,2014-06-04 17:00,2014-05-31 07:00,2014-06-04 17:00,2014-05-31 07:00,2014-06-04 17:00,2015-04-04 15:00,2015-04-09 15:00,,PT_Normal,,,,,bPNzNHbnqUWSJ173N57mOA,rNldGnWlb0qkYV+1cDGnQA,,,N,0,0,,,2014-04-13 07:21,2014-04-14 16:04,admin,admin,
3325,143422,6971,40428,7842,0,N,N,N,CP_Phys,TT_Task,DT_FixedDrtn,TK_NotStart,CZA-TK-0510-1510,Inspection,8396,2648,0,70,0,8.208277,8.208277,70,0,0,0,,,,2015-04-01 15:00,2015-04-09 15:00,,2014-05-28 07:00,2014-06-04 17:00,2014-05-28 07:00,2014-06-04 17:00,2014-05-28 07:00,2014-06-04 17:00,2015-04-01 15:00,2015-04-09 15:00,,PT_Normal,,,,,F5i71W3N5kihIAQEcnvKsg,RmEfGIZe9kCep+/JsM5Jvg,,,N,0,0,,,2014-04-13 07:21,2014-04-14 16:04,admin,admin,
3326,143423,6971,40429,7842,0,N,N,N,CP_Phys,TT_Task,DT_FixedDrtn,TK_NotStart,CZA-TK-0510-1520,Laying and Fit-up,8396,2648,0,20,0,58.497305,58.497305,20,40,0,40,,,,2015-04-09 15:00,2015-04-12 15:00,,2014-06-05 07:00,2014-06-07 17:00,2014-06-05 07:00,2014-06-07 17:00,2014-06-05 07:00,2014-06-07 17:00,2015-04-09 15:00,2015-04-12 15:00,,PT_Normal,,,,,9TAUXuWI7EWSlgwCK6jJQA,p0B6AyDm0kO3GcSjTYnoWQ,,,N,0,0,,,2014-04-13 07:21,2014-04-14 16:04,admin,admin,
3327,143424,6971,40429,7842,0,N,N,N,CP_Phys,TT_Task,DT_FixedDrtn,TK_NotStart,CZA-TK-0510-1530,Welding,8396,2648,0,50,0,73.121631,73.121631,50,100,0,100,,,,2015-04-12 15:00,2015-04-18 15:00,,2014-06-08 07:00,2014-06-12 17:00,2014-06-08 07:00,2014-06-12 17:00,2014-06-08 07:00,2014-06-12 17:00,2015-04-12 15:00,2015-04-18 15:00,,PT_Normal,,,,,3Bjx+Gx4fUefgWiw2ImHwQ,qkGz3sNMSUiCbUCb89hSZA,,,N,0,0,,,2014-04-13 07:21,2014-04-14 16:04,admin,admin,
3328,143425,6971,40429,7842,0,N,N,N,CP_Phys,TT_Task,DT_FixedDrtn,TK_NotStart,CZA-TK-0510-1540,Inspection,8396,2648,0,70,0,14.624326,14.624326,70,0,0,0,,,,2015-04-09 15:00,2015-04-18 15:00,,2014-06-05 07:00,2014-06-12 17:00,2014-06-05 07:00,2014-06-12 17:00,2014-06-05 07:00,2014-06-12 17:00,2015-04-09 15:00,2015-04-18 15:00,,PT_Normal,,,,,QeSNEp135E2EclngsgT81Q,fdsUTSGr20WI2wvtl4V8sw,,,N,0,0,,,2014-04-13 07:21,2014-04-14 16:04,admin,admin,
3329,143426,6971,40430,7842,0,N,N,N,CP_Phys,TT_Task,DT_FixedDrtn,TK_NotStart,CZA-TK-0510-1570,Inspection,8396,2648,0,140,0,0,0,140,0,0,0,,,,2015-04-18 15:00,2015-05-04 15:00,,2014-06-14 07:00,2014-06-29 17:00,2014-06-14 07:00,2014-06-29 17:00,2014-06-14 07:00,2014-06-29 17:00,2015-04-18 15:00,2015-05-04 15:00,,PT_Normal,,,,,+52aAmulHEWNGp+cDKHdgw,7a4SAYdIJUiGEHMIJg8dqg,,,N,0,0,,,2014-04-13 07:21,2014-04-14 16:04,admin,admin,
3330,143427,6971,40430,7842,0,N,N,N,CP_Phys,TT_Task,DT_FixedDrtn,TK_NotStart,CZA-TK-0510-1550,Installation and Fit-up,8396,2648,0,40,0,0,0,40,80,0,80,,,,2015-04-18 15:00,2015-04-22 15:00,,2014-06-14 07:00,2014-06-17 17:00,2014-06-14 07:00,2014-06-17 17:00,2014-06-14 07:00,2014-06-17 17:00,2015-04-18 15:00,2015-04-22 15:00,,PT_Normal,,,,,3HozaW2GIEmoHx+yTDt0Dw,wLG/Pi4iKUaALQN5n9zpoQ,,,N,0,0,,,2014-04-13 07:21,2014-04-14 16:04,admin,admin,
3331,143428,6971,40430,7842,0,N,N,N,CP_Phys,TT_Task,DT_FixedDrtn,TK_NotStart,CZA-TK-0510-1560,Welding,8396,2648,0,100,0,0,0,100,200,0,200,,,,2015-04-22 15:00,2015-05-04 15:00,,2014-06-18 07:00,2014-06-29 17:00,2014-06-18 07:00,2014-06-29 17:00,2014-06-18 07:00,2014-06-29 17:00,2015-04-22 15:00,2015-05-04 15:00,,PT_Normal,,,,,9NxtlC1OXECVaoehpwAUzw,2y/H04U6p0WkLkFx3jqqhA,,,N,0,0,,,2014-04-13 07:21,2014-04-14 16:04,admin,admin,
3332,143429,6971,40431,7842,0,N,N,N,CP_Phys,TT_Task,DT_FixedDrtn,TK_NotStart,CZA-TK-0510-1580,Erection and Fit-up,8396,2648,0,40,0,0,0,40,80,0,80,,,,2015-05-04 15:00,2015-05-09 15:00,,2014-06-30 07:00,2014-07-03 17:00,2014-06-30 07:00,2014-07-03 17:00,2014-06-30 07:00,2014-07-03 17:00,2015-05-04 15:00,2015-05-09 15:00,,PT_Normal,,,,,awp9FVN90kqueCm/XH3JeA,jusSrkKCL0uPyrCINrO/iQ,,,N,0,0,,,2014-04-13 07:21,2014-04-14 16:04,admin,admin,
3333,143430,6971,40431,7842,0,N,N,N,CP_Phys,TT_Task,DT_FixedDrtn,TK_NotStart,CZA-TK-0510-1590,Welding,8396,2648,0,100,0,0,0,100,200,0,200,,,,2015-05-09 15:00,2015-05-20 15:00,,2014-07-05 07:00,2014-07-15 17:00,2014-07-05 07:00,2014-07-15 17:00,2014-07-05 07:00,2014-07-15 17:00,2015-05-09 15:00,2015-05-20 15:00,,PT_Normal,,,,,afWb8yvw0U+2VjJsjhH/qQ,sqIa5aZRVUS8IKgH3Guaew,,,N,0,0,,,2014-04-13 07:21,2014-04-14 16:04,admin,admin,
3334,143431,6971,40431,7842,0,N,N,N,CP_Phys,TT_Task,DT_FixedDrtn,TK_NotStart,CZA-TK-0510-1600,Inspection,8396,2648,0,140,0,0,0,140,0,0,0,,,,2015-05-04 15:00,2015-05-20 15:00,,2014-06-30 07:00,2014-07-15 17:00,2014-06-30 07:00,2014-07-15 17:00,2014-06-30 07:00,2014-07-15 17:00,2015-05-04 15:00,2015-05-20 15:00,,PT_Normal,,,,,7aMx9WdsK0qCYyXmtsX31Q,aXvVd4fXeEeh3esgYtErnQ,,,N,0,0,,,2014-04-13 07:21,2014-04-14 16:04,admin,admin,
3335,143432,6971,40432,7842,0,N,N,N,CP_Phys,TT_Task,DT_FixedDrtn,TK_NotStart,CZA-TK-0510-1610,Erection and Fit-up,8396,2648,0,40,0,0,0,40,80,0,80,,,,2015-05-20 15:00,2015-05-25 15:00,,2014-07-16 07:00,2014-07-20 17:00,2014-07-16 07:00,2014-07-20 17:00,2014-07-16 07:00,2014-07-20 17:00,2015-05-20 15:00,2015-05-25 15:00,,PT_Normal,,,,,njRqwSk8/0CuvEuGlcq4UA,TEzuokol80Cp5jySaHgRaw,,,N,0,0,,,2014-04-13 07:21,2014-04-14 16:04,admin,admin,
3336,143433,6971,40432,7842,0,N,N,N,CP_Phys,TT_Task,DT_FixedDrtn,TK_NotStart,CZA-TK-0510-1620,Welding,8396,2648,0,100,0,0,0,100,200,0,200,,,,2015-05-25 15:00,2015-06-06 15:00,,2014-07-21 07:00,2014-07-31 17:00,2014-07-21 07:00,2014-07-31 17:00,2014-07-21 07:00,2014-07-31 17:00,2015-05-25 15:00,2015-06-06 15:00,,PT_Normal,,,,,MTN0Ejz35ECOLQtsk0ulzA,4GnWDViG7EKgRpMlkUVJOg,,,N,0,0,,,2014-04-13 07:21,2014-04-14 16:04,admin,admin,
3337,143434,6971,40432,7842,0,N,N,N,CP_Phys,TT_Task,DT_FixedDrtn,TK_NotStart,CZA-TK-0510-1630,Inspection,8396,2648,120,140,0,0,0,140,0,0,0,,,,2015-05-20 15:00,2015-06-06 15:00,,2014-07-16 07:00,2014-07-31 17:00,2014-07-16 07:00,2014-07-31 17:00,2014-07-16 07:00,2014-07-31 17:00,2015-05-20 15:00,2015-06-06 15:00,,PT_Normal,,,,,SmQYdt4jG0GkjBtdh2akRg,4A9NDtaftUOezNEJgMWBhA,,,N,0,0,,,2014-04-13 07:21,2014-04-14 16:04,admin,admin,
3338,143435,6971,40433,7842,0,N,N,N,CP_Phys,TT_Task,DT_FixedDrtn,TK_NotStart,CZA-TK-0510-1190,Erection and Fit-up,8396,2648,0,10,0,47.254461,47.254461,10,0,0,0,,,,2015-01-29 15:00,2015-01-31 15:00,,2014-03-27 07:00,2014-03-27 17:00,2014-03-27 07:00,2014-03-27 17:00,2014-03-27 07:00,2014-03-27 17:00,2015-01-29 15:00,2015-01-31 15:00,,PT_Normal,,,,,EtXIW9c2C0eNi4YfDw7IgA,8yFK7vMbcE6smfc6HVq2qA,,,N,0,0,,,2014-04-13 07:21,2014-04-14 16:04,admin,admin,
3339,143436,6971,40433,7842,0,N,N,N,CP_Phys,TT_Task,DT_FixedDrtn,TK_NotStart,CZA-TK-0510-1200,Welding,8396,2648,0,40,0,59.068076,59.068076,40,80,0,80,,,,2015-01-31 15:00,2015-02-04 15:00,,2014-03-29 07:00,2014-04-01 17:00,2014-03-29 07:00,2014-04-01 17:00,2014-03-29 07:00,2014-04-01 17:00,2015-01-31 15:00,2015-02-04 15:00,,PT_Normal,,,,,xk8eulrOcUiDsXSFFfo3wA,PpGeLDHwBUK4Gapa07pfbw,,,N,0,0,,,2014-04-13 07:21,2014-04-14 16:04,admin,admin,
3340,143437,6971,40433,7842,0,N,N,N,CP_Phys,TT_Task,DT_FixedDrtn,TK_NotStart,CZA-TK-0510-1210,Inspection,8396,2648,0,50,0,11.813615,11.813615,50,0,0,0,,,,2015-01-29 15:00,2015-02-04 15:00,,2014-03-27 07:00,2014-04-01 17:00,2014-03-27 07:00,2014-04-01 17:00,2014-03-27 07:00,2014-04-01 17:00,2015-01-29 15:00,2015-02-04 15:00,,PT_Normal,,,,,oyCsnnyjvECtjEvWdsjm5Q,4CO/+hmOv0icurOI4SEDRw,,,N,0,0,,,2014-04-13 07:21,2014-04-14 16:04,admin,admin,
3341,143438,6971,40120,7842,0,N,N,N,CP_Phys,TT_Task,DT_FixedDrtn,TK_NotStart,CZA-TK-0510-1650,"Blasting and Painting of Bottom, Shell and Roof (Inside and Outside)",8396,2528,0,70,0,448.171934,448.171934,70,0,0,0,,,,2015-06-11 15:00,2015-06-20 15:00,,2014-08-21 07:00,2014-08-28 17:00,2014-08-21 07:00,2014-08-28 17:00,2014-08-21 07:00,2014-08-28 17:00,2015-06-11 15:00,2015-06-20 15:00,,PT_Normal,,,,,QHLze8nhbU69zVzZNOLTLQ,,,,N,0,0,,,2014-04-13 07:21,2014-04-14 16:04,admin,admin,
3342,143439,6971,40018,7842,0,N,N,N,CP_Phys,TT_Task,DT_FixedDrtn,TK_NotStart,CZA-TK-0505-1350,Cutting of Annular Plate,8494,2922,0,10,0,168.96,168.96,10,0,0,0,,,,2015-01-15 09:00,2015-01-17 09:00,,2014-02-09 07:00,2014-02-09 17:00,2014-02-09 07:00,2014-02-09 17:00,2014-02-09 07:00,2014-02-09 17:00,2015-01-15 09:00,2015-01-17 09:00,,PT_Normal,,,,,x8v3lmMabkG/KWVz3dyOrQ,95a3zntk2EOYAr4dgHAIAg,,,N,0,0,,,2014-04-13 07:21,2014-04-14 17:03,admin,admin,
3343,143440,6971,40018,7842,0,N,N,N,CP_Phys,TT_Task,DT_FixedDrtn,TK_NotStart,CZA-TK-0505-1360,Cutting of Bottom Plates,8494,3219.5,0,10,0,262.41,262.41,10,0,0,0,,,,2015-02-19 16:30,2015-02-21 16:30,,2014-02-10 07:00,2014-02-10 17:00,2014-02-10 07:00,2014-02-10 17:00,2014-02-10 07:00,2014-02-10 17:00,2015-02-19 16:30,2015-02-21 16:30,,PT_Normal,,,,,0u8LiHz6ZEqFE3O+z/l2jA,UhFyO79G7kSpWXiOFpR2CQ,,,N,0,0,,,2014-04-13 07:21,2014-04-14 17:03,admin,admin,
3344,143441,6971,40018,7842,0,N,N,N,CP_Phys,TT_Task,DT_FixedDrtn,TK_NotStart,CZA-TK-0505-1370,"Cutting, Bevelling & Rolling of Shell No.1",8494,3219.5,0,10,0,270.6132,270.6132,10,0,0,0,,,,2015-02-21 16:30,2015-02-22 16:30,,2014-02-11 07:00,2014-02-11 17:00,2014-02-11 07:00,2014-02-11 17:00,2014-02-11 07:00,2014-02-11 17:00,2015-02-21 16:30,2015-02-22 16:30,,PT_Normal,,,,,x33UR4EppkOBcNcq+7l+wg,ORGK0TG0CUeJI6ZhefLi7g,,,N,0,0,,,2014-04-13 07:21,2014-04-14 17:03,admin,admin,
3345,143442,6971,40018,7842,0,N,N,N,CP_Phys,TT_Task,DT_FixedDrtn,TK_NotStart,CZA-TK-0505-1380,"Cutting, Bevelling & Rolling of Shell No.2",8494,3219.5,0,10,0,240.594,240.594,10,0,0,0,,,,2015-02-22 16:30,2015-02-23 16:30,,2014-02-12 07:00,2014-02-12 17:00,2014-02-12 07:00,2014-02-12 17:00,2014-02-12 07:00,2014-02-12 17:00,2015-02-22 16:30,2015-02-23 16:30,,PT_Normal,,,,,LRb5hgnOiUaJxQHmVRDL+Q,tmbuwjv7DE6TEFFR96mpuw,,,N,0,0,,,2014-04-13 07:21,2014-04-14 17:03,admin,admin,
3346,143443,6971,40018,7842,0,N,N,N,CP_Phys,TT_Task,DT_FixedDrtn,TK_NotStart,CZA-TK-0505-1390,"Cutting, Fit-up and Welding of Shell Nozzles,Manholes and Other Appurtanances",8494,3219.5,0,70,0,0,0,70,0,0,0,,,,2015-02-23 16:30,2015-03-03 16:30,,2014-02-13 07:00,2014-02-20 17:00,2014-02-13 07:00,2014-02-20 17:00,2014-02-13 07:00,2014-02-20 17:00,2015-02-23 16:30,2015-03-03 16:30,,PT_Normal,,,,,kNT0lCcyH0mWJor36uvjqg,OTw77rDVdUaib5eXNouRrw,,,N,0,0,,,2014-04-13 07:21,2014-04-14 17:03,admin,admin,
3347,143444,6971,40018,7842,0,N,N,N,CP_Phys,TT_Task,DT_FixedDrtn,TK_NotStart,CZA-TK-0505-1400,"Cutting, Bevelling & Rolling of Shell No.3",8494,3219.5,0,10,0,412.446,412.446,10,0,0,0,,,,2015-03-03 16:30,2015-03-04 16:30,,2014-02-22 07:00,2014-02-22 17:00,2014-02-22 07:00,2014-02-22 17:00,2014-02-22 07:00,2014-02-22 17:00,2015-03-03 16:30,2015-03-04 16:30,,PT_Normal,,,,,Dy4YbWiMNUWr/nbE4VTCHA,m5P84o1kIkenUNm1PeOcGw,,,N,0,0,,,2014-04-13 07:21,2014-04-14 17:03,admin,admin,
3348,143445,6971,40018,7842,0,N,N,N,CP_Phys,TT_Task,DT_FixedDrtn,TK_NotStart,CZA-TK-0505-1410,"Cutting, Bevelling & Rolling of Shell No.4",8494,3219.5,0,10,0,412.446,412.446,10,0,0,0,,,,2015-03-04 16:30,2015-03-05 16:30,,2014-02-23 07:00,2014-02-23 17:00,2014-02-23 07:00,2014-02-23 17:00,2014-02-23 07:00,2014-02-23 17:00,2015-03-04 16:30,2015-03-05 16:30,,PT_Normal,,,,,4e1ovYQWi0uOKoJvsDuXpw,uUs/NV7GfEaD7BcM0pqN4w,,,N,0,0,,,2014-04-13 07:21,2014-04-14 17:03,admin,admin,
3349,143446,6971,40018,7842,0,N,N,N,CP_Phys,TT_Task,DT_FixedDrtn,TK_NotStart,CZA-TK-0505-1420,"Cutting, Bevelling & Rolling of Shell No.5",8494,3219.5,0,10,0,42.351,42.351,10,0,0,0,,,,2015-03-05 16:30,2015-03-07 16:30,,2014-02-24 07:00,2014-02-24 17:00,2014-02-24 07:00,2014-02-24 17:00,2014-02-24 07:00,2014-02-24 17:00,2015-03-05 16:30,2015-03-07 16:30,,PT_Normal,,,,,7P+yUi7OdU2Dd7I4T3TQbA,RzZDPO2FSUyBYYwghLBtiw,,,N,0,0,,,2014-04-13 07:21,2014-04-14 17:03,admin,admin,
3350,143447,6971,40018,7842,0,N,N,N,CP_Phys,TT_Task,DT_FixedDrtn,TK_NotStart,CZA-TK-0505-1430,"Cutting, Bevelling & Rolling of Shell No.6",8494,3219.5,0,10,0,165.402,165.402,10,0,0,0,,,,2015-03-07 16:30,2015-03-08 16:30,,2014-02-25 07:00,2014-02-25 17:00,2014-02-25 07:00,2014-02-25 17:00,2014-02-25 07:00,2014-02-25 17:00,2015-03-07 16:30,2015-03-08 16:30,,PT_Normal,,,,,zKOzhCc+3UCeQCrK072+EA,0wo0oZOFBUy7UGVSvpb9LA,,,N,0,0,,,2014-04-13 07:21,2014-04-14 17:03,admin,admin,
3351,143448,6971,40018,7842,0,N,N,N,CP_Phys,TT_Task,DT_FixedDrtn,TK_NotStart,CZA-TK-0505-1440,"Cutting, Bevelling & Rolling of Curb Angle",8494,3219.5,0,20,0,20.25,20.25,20,0,0,0,,,,2015-03-08 16:30,2015-03-10 16:30,,2014-02-26 07:00,2014-02-27 17:00,2014-02-26 07:00,2014-02-27 17:00,2014-02-26 07:00,2014-02-27 17:00,2015-03-08 16:30,2015-03-10 16:30,,PT_Normal,,,,,lA3QkIS4ZUWtsLETkGKHig,zwxn9SVIdkKBiiMc9phQtw,,,N,0,0,,,2014-04-13 07:21,2014-04-14 17:03,admin,admin,
3352,143449,6971,40018,7842,0,N,N,N,CP_Phys,TT_Task,DT_FixedDrtn,TK_NotStart,CZA-TK-0505-1450,"Cutting, Bevelling & Rolling of Roof Structure",8494,3219.5,0,50,0,417.8124,417.8124,50,0,0,0,,,,2015-03-10 16:30,2015-03-16 16:30,,2014-03-01 07:00,2014-03-05 17:00,2014-03-01 07:00,2014-03-05 17:00,2014-03-01 07:00,2014-03-05 17:00,2015-03-10 16:30,2015-03-16 16:30,,PT_Normal,,,,,oTXbXwuWBEuSa8ShYoG2yA,XikyyQBGPECtXa2Uafmj2Q,,,N,0,0,,,2014-04-13 07:21,2014-04-14 17:03,admin,admin,
3353,143450,6971,40018,7842,0,N,N,N,CP_Phys,TT_Task,DT_FixedDrtn,TK_NotStart,CZA-TK-0505-1460,Cutting of Roof Plates,8494,3219.5,0,12.5,0,0,0,12.5,0,0,0,,,,2015-03-16 16:30,2015-03-18 09:00,,2014-03-06 07:00,2014-03-08 09:30,2014-03-06 07:00,2014-03-08 09:30,2014-03-06 07:00,2014-03-08 09:30,2015-03-16 16:30,2015-03-18 09:00,,PT_Normal,,,,,z7EsJEgvTE+SY3/wVJ5EZA,RNOHOV50zUaOlSC1vLT7Ng,,,N,0,0,,,2014-04-13 07:21,2014-04-14 17:03,admin,admin,
3354,143451,6971,40018,7842,0,N,N,N,CP_Phys,TT_Task,DT_FixedDrtn,TK_NotStart,CZA-TK-0505-1470,"Cutting,Fit-up and Welding of Roof Nozzles, Manholes & Other Appurtanances",8494,3219.5,0,70,0,0,0,70,0,0,0,,,,2015-03-18 09:00,2015-03-26 09:00,,2014-03-08 09:30,2014-03-16 09:30,2014-03-08 09:30,2014-03-16 09:30,2014-03-08 09:30,2014-03-16 09:30,2015-03-18 09:00,2015-03-26 09:00,,PT_Normal,,,,,hhOJHCI9AESbB8vSpeikjA,TmG4bwXb00a29A8pT+5t8Q,,,N,0,0,,,2014-04-13 07:21,2014-04-14 17:03,admin,admin,
3355,143452,6971,40018,7842,0,N,N,N,CP_Phys,TT_Task,DT_FixedDrtn,TK_NotStart,CZA-TK-0505-1480,"Cutting, Fit-up & Welding  of Roof Platform, Gratings and Handrails",8494,3219.5,0,120,0,0,0,120,0,0,0,,,,2015-03-19 15:00,2015-04-02 15:00,,2014-03-09 15:30,2014-03-23 15:30,2014-03-09 15:30,2014-03-23 15:30,2014-03-09 15:30,2014-03-23 15:30,2015-03-19 15:00,2015-04-02 15:00,,PT_Normal,,,,,xhHhibrA2Uue4RbSmZ9zLQ,g0s4TsdvdEiE5Q0TV2ZAiA,,,N,0,0,,,2014-04-13 07:21,2014-04-14 17:03,admin,admin,
3356,143453,6971,40018,7842,0,N,N,N,CP_Phys,TT_Task,DT_FixedDrtn,TK_NotStart,CZA-TK-0505-1490,"Cutting, Fit-up and Welding of Stairway Platfrom, Gratings and Handrails",8494,3219.5,747.5,120,0,0,0,120,0,0,0,,,,2015-03-23 09:00,2015-04-06 09:00,,2014-03-12 09:30,2014-03-26 09:30,2014-03-12 09:30,2014-03-26 09:30,2014-03-12 09:30,2014-03-26 09:30,2015-03-23 09:00,2015-04-06 09:00,,PT_Normal,,,,,Hf7GCzc+dkGjU3i/AuZ8SQ,eY+1DGn9bkmp6siIRAaYCw,,,N,0,0,,,2014-04-13 07:21,2014-04-14 17:03,admin,admin,
3357,143454,6971,40019,7842,0,N,N,N,CP_Phys,TT_Mile,DT_FixedDrtn,TK_NotStart,CZA-TK-0505-1500,Foundation Takeover from Client,,0,0,0,0,0,0,0,0,0,0,2014-03-31 00:00,,,2014-03-30 17:00,2014-03-30 17:00,,2014-03-31 07:00,2014-03-31 07:00,2014-03-31 07:00,2014-03-31 07:00,2014-03-31 07:00,2014-03-31 07:00,2014-03-30 17:00,2014-03-30 17:00,CS_MSO,PT_Normal,,,,,1MP/4R/85UmyMi1uR8k9hQ,yKeFZacKUEiwNgAMGEVYlQ,,,N,0,0,,,2014-04-13 07:21,2014-04-13 07:42,admin,admin,
3358,143455,6971,40020,7842,0,N,N,N,CP_Phys,TT_Task,DT_FixedDrtn,TK_NotStart,CZA-TK-0505-2050,Tank Calibration,8389,2472,0,50,0,293.199661,293.199661,50,0,0,0,,,,2015-06-20 15:00,2015-06-25 15:00,,2014-09-04 13:00,2014-09-10 13:00,2014-09-04 13:00,2014-09-10 13:00,2014-09-04 13:00,2014-09-10 13:00,2015-06-20 15:00,2015-06-25 15:00,,PT_Normal,,,,,00aban5KYkaUjxRXP+EgQg,z7lSZ0LcwU+qR5OgiwK9Eg,,,N,0,0,,,2014-04-13 07:21,2014-04-14 16:04,admin,admin,
3359,143456,6971,40020,7842,0,N,N,N,CP_Phys,TT_Task,DT_FixedDrtn,TK_NotStart,CZA-TK-0505-2060,Tank Handover,8389,2472,2472,20,0,293.199661,293.199661,20,0,0,0,,,,2015-06-25 15:00,2015-06-28 15:00,,2014-09-10 13:00,2014-09-13 13:00,2014-09-10 13:00,2014-09-13 13:00,2014-09-10 13:00,2014-09-13 13:00,2015-06-25 15:00,2015-06-28 15:00,,PT_Normal,,,,,GGefhBxtnEWTaF2VMavRrw,Me/X4il3u06IG9jp9hD4Mw,,,N,0,0,,,2014-04-13 07:21,2014-04-14 16:04,admin,admin,
3360,143457,6971,40440,7842,0,N,N,N,CP_Phys,TT_Task,DT_FixedDrtn,TK_NotStart,CZA-TK-0505-1870,Laying and Fit-up,8389,2472,0,20,0,0,0,20,80,0,80,,,,2015-03-23 09:00,2015-03-25 09:00,,2014-06-08 07:00,2014-06-09 17:00,2014-06-08 07:00,2014-06-09 17:00,2014-06-08 07:00,2014-06-09 17:00,2015-03-23 09:00,2015-03-25 09:00,,PT_Normal,,,,,Gm6Q+oC3lUO5Th/gyM4Ldg,Ixff7RwhPU+cUOPmGqMEGg,,,N,0,0,,,2014-04-13 07:21,2014-04-14 16:04,admin,admin,
3361,143458,6971,40440,7842,0,N,N,N,CP_Phys,TT_Task,DT_FixedDrtn,TK_NotStart,CZA-TK-0505-1890,Inspection,8389,2472,0,70,0,0,0,70,0,0,0,,,,2015-03-23 09:00,2015-03-31 09:00,,2014-06-08 07:00,2014-06-15 17:00,2014-06-08 07:00,2014-06-15 17:00,2014-06-08 07:00,2014-06-15 17:00,2015-03-23 09:00,2015-03-31 09:00,,PT_Normal,,,,,Pp6drKpAvESP8cEkBmhHUw,tLifSI/P0UCu994ej5XccA,,,N,0,0,,,2014-04-13 07:21,2014-04-14 16:04,admin,admin,
3362,143459,6971,40440,7842,0,N,N,N,CP_Phys,TT_Task,DT_FixedDrtn,TK_NotStart,CZA-TK-0505-1880,Welding,8389,2472,0,50,0,0,0,50,200,0,200,,,,2015-03-25 09:00,2015-03-31 09:00,,2014-06-10 07:00,2014-06-15 17:00,2014-06-10 07:00,2014-06-15 17:00,2014-06-10 07:00,2014-06-15 17:00,2015-03-25 09:00,2015-03-31 09:00,,PT_Normal,,,,,zRPiQUtmMkmm6Zv9dOdBig,NrnzL0Iua0CNMAv+IDhizw,,,N,0,0,,,2014-04-13 07:21,2014-04-14 16:04,admin,admin,
3363,143460,6971,40441,7842,0,N,N,N,CP_Phys,TT_Task,DT_FixedDrtn,TK_NotStart,CZA-TK-0505-1900,Installation and Fit-up,8389,2472,0,20,0,0,0,20,80,0,80,,,,2015-03-31 09:00,2015-04-02 09:00,,2014-06-16 07:00,2014-06-17 17:00,2014-06-16 07:00,2014-06-17 17:00,2014-06-16 07:00,2014-06-17 17:00,2015-03-31 09:00,2015-04-02 09:00,,PT_Normal,,,,,PLNepYQquE+2JshVNAwwOQ,EqQORZYcK0yUlivMSPgB5g,,,N,0,0,,,2014-04-13 07:21,2014-04-14 16:04,admin,admin,
3364,143461,6971,40441,7842,0,N,N,N,CP_Phys,TT_Task,DT_FixedDrtn,TK_NotStart,CZA-TK-0505-1910,Welding,8389,2472,0,30,0,0,0,30,120,0,120,,,,2015-04-02 09:00,2015-04-06 09:00,,2014-06-18 07:00,2014-06-21 17:00,2014-06-18 07:00,2014-06-21 17:00,2014-06-18 07:00,2014-06-21 17:00,2015-04-02 09:00,2015-04-06 09:00,,PT_Normal,,,,,M3b87eYJEEG1am6px/7eMg,g2V4SVftSUueYGMnAU07WA,,,N,0,0,,,2014-04-13 07:21,2014-04-14 16:04,admin,admin,
3365,143462,6971,40441,7842,0,N,N,N,CP_Phys,TT_Task,DT_FixedDrtn,TK_NotStart,CZA-TK-0505-1920,Inspection,8389,2472,0,50,0,0,0,50,0,0,0,,,,2015-03-31 09:00,2015-04-06 09:00,,2014-06-16 07:00,2014-06-21 17:00,2014-06-16 07:00,2014-06-21 17:00,2014-06-16 07:00,2014-06-21 17:00,2015-03-31 09:00,2015-04-06 09:00,,PT_Normal,,,,,nAUjeMEAYUOfYsmrscyU3Q,XJlSdAU7MUeLxfSc1zGZTA,,,N,0,0,,,2014-04-13 07:21,2014-04-14 16:04,admin,admin,
3366,143463,6971,40442,7842,0,N,N,N,CP_Phys,TT_Task,DT_FixedDrtn,TK_NotStart,CZA-TK-0505-1930,Erection and Fit-up,8389,2472,0,30,0,0,0,30,120,0,120,,,,2015-04-06 09:00,2015-04-09 09:00,,2014-06-22 07:00,2014-06-24 17:00,2014-06-22 07:00,2014-06-24 17:00,2014-06-22 07:00,2014-06-24 17:00,2015-04-06 09:00,2015-04-09 09:00,,PT_Normal,,,,,36YI26Uz9UmZkKSz8NZeug,apejBvbWikStf5lTmYEaRQ,,,N,0,0,,,2014-04-13 07:21,2014-04-14 16:04,admin,admin,
3367,143464,6971,40442,7842,0,N,N,N,CP_Phys,TT_Task,DT_FixedDrtn,TK_NotStart,CZA-TK-0505-1940,Welding,8389,2472,0,90,0,0,0,90,360,0,360,,,,2015-04-09 09:00,2015-04-20 09:00,,2014-06-25 07:00,2014-07-05 17:00,2014-06-25 07:00,2014-07-05 17:00,2014-06-25 07:00,2014-07-05 17:00,2015-04-09 09:00,2015-04-20 09:00,,PT_Normal,,,,,KSBQhsVdtE+DC6tc+tt+LQ,JDElMGCSHkW8Bx5e1X9pdw,,,N,0,0,,,2014-04-13 07:21,2014-04-14 16:04,admin,admin,
3368,143465,6971,40442,7842,0,N,N,N,CP_Phys,TT_Task,DT_FixedDrtn,TK_NotStart,CZA-TK-0505-1950,Inspection,8389,2472,0,120,0,0,0,120,0,0,0,,,,2015-04-06 09:00,2015-04-20 09:00,,2014-06-22 07:00,2014-07-05 17:00,2014-06-22 07:00,2014-07-05 17:00,2014-06-22 07:00,2014-07-05 17:00,2015-04-06 09:00,2015-04-20 09:00,,PT_Normal,,,,,Lo4LTjgvPkaH5p8zNYlwLQ,oW42OAgvOEWOnRpbWasWhA,,,N,0,0,,,2014-04-13 07:21,2014-04-14 16:04,admin,admin,
3369,143466,6971,40443,7842,0,N,N,N,CP_Phys,TT_Task,DT_FixedDrtn,TK_NotStart,CZA-TK-0505-1960,Erection and Fit-up,8389,2472,0,30,0,0,0,30,120,0,120,,,,2015-04-12 15:00,2015-04-15 15:00,,2014-06-28 13:00,2014-07-01 13:00,2014-06-28 13:00,2014-07-01 13:00,2014-06-28 13:00,2014-07-01 13:00,2015-04-12 15:00,2015-04-15 15:00,,PT_Normal,,,,,c/YVvROmNk2+cxwrfE+qKg,C0Yz7Swju0O6ILZsortJAg,,,N,0,0,,,2014-04-13 07:21,2014-04-14 16:04,admin,admin,
3370,143467,6971,40443,7842,0,N,N,N,CP_Phys,TT_Task,DT_FixedDrtn,TK_NotStart,CZA-TK-0505-1970,Welding,8389,2472,0,90,0,0,0,90,360,0,360,,,,2015-04-15 15:00,2015-04-26 15:00,,2014-07-01 13:00,2014-07-12 13:00,2014-07-01 13:00,2014-07-12 13:00,2014-07-01 13:00,2014-07-12 13:00,2015-04-15 15:00,2015-04-26 15:00,,PT_Normal,,,,,ZYfRNFp/D0ChVUSacc6Y9g,LArhW7GYhkiS//RubGrwnw,,,N,0,0,,,2014-04-13 07:21,2014-04-14 16:04,admin,admin,
3371,143468,6971,40443,7842,0,N,N,N,CP_Phys,TT_Task,DT_FixedDrtn,TK_NotStart,CZA-TK-0505-1980,Inspection,8389,2472,0,120,0,0,0,120,0,0,0,,,,2015-04-12 15:00,2015-04-26 15:00,,2014-06-28 13:00,2014-07-12 13:00,2014-06-28 13:00,2014-07-12 13:00,2014-06-28 13:00,2014-07-12 13:00,2015-04-12 15:00,2015-04-26 15:00,,PT_Normal,,,,,pYEtDBpaek6YATN1+Jrhmw,+e22TGbXtkiRw3LKmnxUyw,,,N,0,0,,,2014-04-13 07:21,2014-04-14 16:04,admin,admin,
3372,143469,6971,40444,7842,0,N,N,N,CP_Phys,TT_Task,DT_FixedDrtn,TK_NotStart,CZA-TK-0505-1990,Installation of Primary and Secondary Seal,8389,2472,0,30,0,0,0,30,0,0,0,,,,2015-04-26 15:00,2015-04-29 15:00,,2014-07-12 13:00,2014-07-15 13:00,2014-07-12 13:00,2014-07-15 13:00,2014-07-12 13:00,2014-07-15 13:00,2015-04-26 15:00,2015-04-29 15:00,,PT_Normal,,,,,UlDmQgUbeUWUuAsX814FcA,EHUbUpWkP0yCAgxPOt5a/Q,,,N,0,0,,,2014-04-13 07:21,2014-04-14 16:04,admin,admin,
3373,143470,6971,40444,7842,0,N,N,N,CP_Phys,TT_Task,DT_FixedDrtn,TK_NotStart,CZA-TK-0505-2000,Inspection,8389,2472,0,10,0,0,0,10,0,0,0,,,,2015-04-29 15:00,2015-04-30 15:00,,2014-07-15 13:00,2014-07-16 13:00,2014-07-15 13:00,2014-07-16 13:00,2014-07-15 13:00,2014-07-16 13:00,2015-04-29 15:00,2015-04-30 15:00,,PT_Normal,,,,,fopRGaO7AUi/J8hsRmNTIw,1UU8YaEzJEe4216vX1DsEA,,,N,0,0,,,2014-04-13 07:21,2014-04-14 16:04,admin,admin,
3374,143471,6971,40654,7842,0,N,N,N,CP_Phys,TT_Task,DT_FixedDrtn,TK_NotStart,CZA-TK-0505-2020,Inspection,8389,2472,0,10,0,0,0,10,0,0,0,,,,2015-05-16 15:00,2015-05-17 15:00,,2014-07-31 13:00,2014-08-02 13:00,2014-07-31 13:00,2014-08-02 13:00,2014-07-31 13:00,2014-08-02 13:00,2015-05-16 15:00,2015-05-17 15:00,,PT_Normal,,,,,BGzgXsPS/0e7xVCzZ9fuQw,,,,N,0,0,,,2014-04-13 07:21,2014-04-14 16:04,admin,admin,
3375,143472,6971,40654,7842,0,N,N,N,CP_Phys,TT_Task,DT_FixedDrtn,TK_NotStart,CZA-TK-0505-2010,Insulation Works,8389,2472,0,130,0,0,0,130,520,0,520,,,,2015-04-30 15:00,2015-05-16 15:00,,2014-07-16 13:00,2014-07-31 13:00,2014-07-16 13:00,2014-07-31 13:00,2014-07-16 13:00,2014-07-31 13:00,2015-04-30 15:00,2015-05-16 15:00,,PT_Normal,,,,,8QmqZUFv3kKhOHPeAL8iMA,,,,N,0,0,,,2014-04-13 07:21,2014-04-14 16:04,admin,admin,
3376,143473,6971,40655,7842,0,N,N,N,CP_Phys,TT_Task,DT_FixedDrtn,TK_NotStart,CZA-TK-0505-1520,Welding,8389,2472,0,30,0,92.458034,92.458034,30,120,0,120,,,,2015-01-14 09:00,2015-01-18 09:00,,2014-04-01 07:00,2014-04-03 17:00,2014-04-01 07:00,2014-04-03 17:00,2014-04-01 07:00,2014-04-03 17:00,2015-01-14 09:00,2015-01-18 09:00,,PT_Normal,,,,,8xl4bTO4LkST7babh7DuEg,P9+okIPx5kanosFkcYefpg,,,N,0,0,,,2014-04-13 07:21,2014-04-14 16:04,admin,admin,
3377,143474,6971,40655,7842,0,N,N,N,CP_Phys,TT_Task,DT_FixedDrtn,TK_NotStart,CZA-TK-0505-1510,Laying and Fit-up,8389,2472,0,10,0,73.966427,73.966427,10,40,0,40,,,,2015-01-13 09:00,2015-01-14 09:00,,2014-03-31 07:00,2014-03-31 17:00,2014-03-31 07:00,2014-03-31 17:00,2014-03-31 07:00,2014-03-31 17:00,2015-01-13 09:00,2015-01-14 09:00,,PT_Normal,,,,,4eeYawPAc0Wbm7M8dpr1XA,O3IjZXzGpUCZYgEFlnbR7w,,,N,0,0,,,2014-04-13 07:21,2014-04-14 16:04,admin,admin,
3378,143475,6971,40655,7842,0,N,N,N,CP_Phys,TT_Task,DT_FixedDrtn,TK_NotStart,CZA-TK-0505-1530,Inspection,8389,2472,0,40,0,18.491607,18.491607,40,0,0,0,,,,2015-01-13 09:00,2015-01-18 09:00,,2014-03-31 07:00,2014-04-03 17:00,2014-03-31 07:00,2014-04-03 17:00,2014-03-31 07:00,2014-04-03 17:00,2015-01-13 09:00,2015-01-18 09:00,,PT_Normal,,,,,vGYhzr3Pdku0+kJJYarLeA,dNZwTPjbUUeD+6O2j1GVXg,,,N,0,0,,,2014-04-13 07:21,2014-04-14 16:04,admin,admin,
3379,143476,6971,40656,7842,0,N,N,N,CP_Phys,TT_Task,DT_FixedDrtn,TK_NotStart,CZA-TK-0505-1540,Erection and Fit-up,8389,2472,0,10,0,114.876481,114.876481,10,40,0,40,,,,2015-01-18 09:00,2015-01-19 09:00,,2014-04-05 07:00,2014-04-05 17:00,2014-04-05 07:00,2014-04-05 17:00,2014-04-05 07:00,2014-04-05 17:00,2015-01-18 09:00,2015-01-19 09:00,,PT_Normal,,,,,HTRvS44vXUqG7NNRGXtRCg,nJdJuHBBCUGns6GISdw8fA,,,N,0,0,,,2014-04-13 07:21,2014-04-14 16:04,admin,admin,
3380,143477,6971,40656,7842,0,N,N,N,CP_Phys,TT_Task,DT_FixedDrtn,TK_NotStart,CZA-TK-0505-1550,Welding,8389,2472,0,30,0,143.595601,143.595601,30,120,0,120,,,,2015-01-19 09:00,2015-01-22 09:00,,2014-04-06 07:00,2014-04-08 17:00,2014-04-06 07:00,2014-04-08 17:00,2014-04-06 07:00,2014-04-08 17:00,2015-01-19 09:00,2015-01-22 09:00,,PT_Normal,,,,,Ke45jyi9LE2dXP/dYQsvtw,ULWzOHOaNEq7EkB0rvLXFg,,,N,0,0,,,2014-04-13 07:21,2014-04-14 16:04,admin,admin,
3381,143478,6971,40656,7842,0,N,N,N,CP_Phys,TT_Task,DT_FixedDrtn,TK_NotStart,CZA-TK-0505-1560,Inspection,8389,2472,0,40,0,28.71912,28.71912,40,0,0,0,,,,2015-01-18 09:00,2015-01-22 09:00,,2014-04-05 07:00,2014-04-08 17:00,2014-04-05 07:00,2014-04-08 17:00,2014-04-05 07:00,2014-04-08 17:00,2015-01-18 09:00,2015-01-22 09:00,,PT_Normal,,,,,Y74eXgps/UKWQyjq1tbPvg,BliE5LbbzEuQKJ7lpNkohw,,,N,0,0,,,2014-04-13 07:21,2014-04-14 16:04,admin,admin,
3382,143479,6971,40657,7842,0,N,N,N,CP_Phys,TT_Task,DT_FixedDrtn,TK_NotStart,CZA-TK-0505-1570,Erection and Fit-up,8389,2472,0,10,0,118.467635,118.467635,10,0,0,0,,,,2015-01-22 09:00,2015-01-24 09:00,,2014-04-09 07:00,2014-04-09 17:00,2014-04-09 07:00,2014-04-09 17:00,2014-04-09 07:00,2014-04-09 17:00,2015-01-22 09:00,2015-01-24 09:00,,PT_Normal,,,,,ECecY5rpjk+UxCNyF7weYA,enAQKU3r90mfWaPlYmy4WA,,,N,0,0,,,2014-04-13 07:21,2014-04-14 16:04,admin,admin,
3383,143480,6971,40657,7842,0,N,N,N,CP_Phys,TT_Task,DT_FixedDrtn,TK_NotStart,CZA-TK-0505-1580,Welding,8389,2472,0,40,0,148.084544,148.084544,40,160,0,160,,,,2015-01-24 09:00,2015-01-28 09:00,,2014-04-10 07:00,2014-04-14 17:00,2014-04-10 07:00,2014-04-14 17:00,2014-04-10 07:00,2014-04-14 17:00,2015-01-24 09:00,2015-01-28 09:00,,PT_Normal,,,,,vfuuXIdB+U2zvOwEc2fB8w,ExEez/69rEqKDMiv7khrkQ,,,N,0,0,,,2014-04-13 07:21,2014-04-14 16:04,admin,admin,
3384,143481,6971,40657,7842,0,N,N,N,CP_Phys,TT_Task,DT_FixedDrtn,TK_NotStart,CZA-TK-0505-1590,Inspection,8389,2472,0,50,0,29.616909,29.616909,50,0,0,0,,,,2015-01-22 09:00,2015-01-28 09:00,,2014-04-09 07:00,2014-04-14 17:00,2014-04-09 07:00,2014-04-14 17:00,2014-04-09 07:00,2014-04-14 17:00,2015-01-22 09:00,2015-01-28 09:00,,PT_Normal,,,,,e4+p/G/y806MqFRecOwqEA,sO39ROrygEavjBEuqmlEcw,,,N,0,0,,,2014-04-13 07:21,2014-04-14 16:04,admin,admin,
3385,143482,6971,40658,7842,0,N,N,N,CP_Phys,TT_Task,DT_FixedDrtn,TK_NotStart,CZA-TK-0505-1600,Erection and Fit-up,8389,2472,0,10,0,105.325986,105.325986,10,0,0,0,,,,2015-01-28 09:00,2015-01-29 09:00,,2014-04-15 07:00,2014-04-15 17:00,2014-04-15 07:00,2014-04-15 17:00,2014-04-15 07:00,2014-04-15 17:00,2015-01-28 09:00,2015-01-29 09:00,,PT_Normal,,,,,fF9wUsjYk0qsB1ludL89RQ,V544l7A3Pk6zp+ayPZs+dw,,,N,0,0,,,2014-04-13 07:21,2014-04-14 16:04,admin,admin,
3386,143483,6971,40658,7842,0,N,N,N,CP_Phys,TT_Task,DT_FixedDrtn,TK_NotStart,CZA-TK-0505-1610,Welding,8389,2472,0,40,0,131.657483,131.657483,40,160,0,160,,,,2015-01-29 09:00,2015-02-03 09:00,,2014-04-16 07:00,2014-04-20 17:00,2014-04-16 07:00,2014-04-20 17:00,2014-04-16 07:00,2014-04-20 17:00,2015-01-29 09:00,2015-02-03 09:00,,PT_Normal,,,,,URwV1YUAvEmvrGgYd19cTg,KTYSFVFjq0e4wz0Mdtt/iA,,,N,0,0,,,2014-04-13 07:21,2014-04-14 16:04,admin,admin,
3387,143484,6971,40658,7842,0,N,N,N,CP_Phys,TT_Task,DT_FixedDrtn,TK_NotStart,CZA-TK-0505-1620,Inspection,8389,2472,0,50,0,26.331497,26.331497,50,0,0,0,,,,2015-01-28 09:00,2015-02-03 09:00,,2014-04-15 07:00,2014-04-20 17:00,2014-04-15 07:00,2014-04-20 17:00,2014-04-15 07:00,2014-04-20 17:00,2015-01-28 09:00,2015-02-03 09:00,,PT_Normal,,,,,yJjWfV0ssUqItC3peyTjAw,XyDl6T5WHU2nvOrc1VuQHQ,,,N,0,0,,,2014-04-13 07:21,2014-04-14 16:04,admin,admin,
3388,143485,6971,40659,7842,0,N,N,N,CP_Phys,TT_Task,DT_FixedDrtn,TK_NotStart,CZA-TK-0505-1630,"Cutting, Installation and Fit-up",8389,2472,0,20,0,0,0,20,80,0,80,,,,2015-02-03 09:00,2015-02-05 09:00,,2014-04-21 07:00,2014-04-22 17:00,2014-04-21 07:00,2014-04-22 17:00,2014-04-21 07:00,2014-04-22 17:00,2015-02-03 09:00,2015-02-05 09:00,,PT_Normal,,,,,s6PH9/G+AUmuCX81avM4Kg,9VihXiU/VEqmBFTYs9XkMA,,,N,0,0,,,2014-04-13 07:21,2014-04-14 16:04,admin,admin,
3389,143486,6971,40659,7842,0,N,N,N,CP_Phys,TT_Task,DT_FixedDrtn,TK_NotStart,CZA-TK-0505-1640,Welding,8389,2472,0,20,0,0,0,20,80,0,80,,,,2015-02-05 09:00,2015-02-08 09:00,,2014-04-23 07:00,2014-04-24 17:00,2014-04-23 07:00,2014-04-24 17:00,2014-04-23 07:00,2014-04-24 17:00,2015-02-05 09:00,2015-02-08 09:00,,PT_Normal,,,,,oiRz5VyLi0+EA0ju2S9cRw,2CRy1+frykiS2DLkJqJJtQ,,,N,0,0,,,2014-04-13 07:21,2014-04-14 16:04,admin,admin,
3390,143487,6971,40659,7842,0,N,N,N,CP_Phys,TT_Task,DT_FixedDrtn,TK_NotStart,CZA-TK-0505-1650,Inspection,8389,2472,0,40,0,0,0,40,0,0,0,,,,2015-02-03 09:00,2015-02-08 09:00,,2014-04-21 07:00,2014-04-24 17:00,2014-04-21 07:00,2014-04-24 17:00,2014-04-21 07:00,2014-04-24 17:00,2015-02-03 09:00,2015-02-08 09:00,,PT_Normal,,,,,aNZIrOx2H0iahz78maViVg,DUGmodsm9E6kpjyH7Nc12w,,,N,0,0,,,2014-04-13 07:21,2014-04-14 16:04,admin,admin,
3391,143488,6971,40660,7842,0,N,N,N,CP_Phys,TT_Task,DT_FixedDrtn,TK_NotStart,CZA-TK-0505-1670,Welding,8389,2472,0,40,0,225.698073,225.698073,40,160,0,160,,,,2015-02-09 09:00,2015-02-14 09:00,,2014-04-27 07:00,2014-04-30 17:00,2014-04-27 07:00,2014-04-30 17:00,2014-04-27 07:00,2014-04-30 17:00,2015-02-09 09:00,2015-02-14 09:00,,PT_Normal,,,,,3cmRrxFkJkm4medp0PY3Rw,GiO2zE440EeGPK5xKVG0Cw,,,N,0,0,,,2014-04-13 07:21,2014-04-14 16:04,admin,admin,
3392,143489,6971,40660,7842,0,N,N,N,CP_Phys,TT_Task,DT_FixedDrtn,TK_NotStart,CZA-TK-0505-1680,Inspection,8389,2472,0,50,0,45.139615,45.139615,50,0,0,0,,,,2015-02-08 09:00,2015-02-14 09:00,,2014-04-26 07:00,2014-04-30 17:00,2014-04-26 07:00,2014-04-30 17:00,2014-04-26 07:00,2014-04-30 17:00,2015-02-08 09:00,2015-02-14 09:00,,PT_Normal,,,,,ja3P/moeq0iWK481DKWUng,wmZAFy7RzU6sipJWN8RpVg,,,N,0,0,,,2014-04-13 07:21,2014-04-14 16:04,admin,admin,
3393,143490,6971,40660,7842,0,N,N,N,CP_Phys,TT_Task,DT_FixedDrtn,TK_NotStart,CZA-TK-0505-1660,Erection and Fit-up,8389,2472,0,10,0,180.558458,180.558458,10,0,0,0,,,,2015-02-08 09:00,2015-02-09 09:00,,2014-04-26 07:00,2014-04-26 17:00,2014-04-26 07:00,2014-04-26 17:00,2014-04-26 07:00,2014-04-26 17:00,2015-02-08 09:00,2015-02-09 09:00,,PT_Normal,,,,,8m2FRrkPLUyxW1iWgWiJgw,NVEeZSJDLEWk1e0h5aL54g,,,N,0,0,,,2014-04-13 07:21,2014-04-14 16:04,admin,admin,
3394,143491,6971,40661,7842,0,N,N,N,CP_Phys,TT_Task,DT_FixedDrtn,TK_NotStart,CZA-TK-0505-1690,Erection and Fit-up,8389,2472,0,10,0,180.558458,180.558458,10,0,0,0,,,,2015-02-14 09:00,2015-02-15 09:00,,2014-05-01 07:00,2014-05-01 17:00,2014-05-01 07:00,2014-05-01 17:00,2014-05-01 07:00,2014-05-01 17:00,2015-02-14 09:00,2015-02-15 09:00,,PT_Normal,,,,,pMM/AYXijUG5WjnLx+xEVA,ze1Ft+1Lbkq/DImoemNKJg,,,N,0,0,,,2014-04-13 07:21,2014-04-14 16:04,admin,admin,
3395,143492,6971,40661,7842,0,N,N,N,CP_Phys,TT_Task,DT_FixedDrtn,TK_NotStart,CZA-TK-0505-1700,Welding,8389,2472,0,40,0,225.698073,225.698073,40,160,0,160,,,,2015-02-15 09:00,2015-02-19 09:00,,2014-05-03 07:00,2014-05-06 17:00,2014-05-03 07:00,2014-05-06 17:00,2014-05-03 07:00,2014-05-06 17:00,2015-02-15 09:00,2015-02-19 09:00,,PT_Normal,,,,,5LAjkpZxskuIuOBhH8mhQg,XQPt4p8YQUmWhMXQekjvUw,,,N,0,0,,,2014-04-13 07:21,2014-04-14 16:04,admin,admin,
3396,143493,6971,40661,7842,0,N,N,N,CP_Phys,TT_Task,DT_FixedDrtn,TK_NotStart,CZA-TK-0505-1710,Inspection,8389,2472,0,50,0,45.139615,45.139615,50,0,0,0,,,,2015-02-14 09:00,2015-02-19 09:00,,2014-05-01 07:00,2014-05-06 17:00,2014-05-01 07:00,2014-05-06 17:00,2014-05-01 07:00,2014-05-06 17:00,2015-02-14 09:00,2015-02-19 09:00,,PT_Normal,,,,,Fo4h5xtz6U6hR1UYgMoy2w,VnKhByb3tEeljQAd1IuPSQ,,,N,0,0,,,2014-04-13 07:21,2014-04-14 16:04,admin,admin,
3397,143494,6971,40662,7842,0,N,N,N,CP_Phys,TT_Task,DT_FixedDrtn,TK_NotStart,CZA-TK-0505-1720,Erection and Fit-up,8389,2472,0,10,0,18.5402,18.5402,10,0,0,0,,,,2015-02-19 09:00,2015-02-21 09:00,,2014-05-07 07:00,2014-05-07 17:00,2014-05-07 07:00,2014-05-07 17:00,2014-05-07 07:00,2014-05-07 17:00,2015-02-19 09:00,2015-02-21 09:00,,PT_Normal,,,,,oYj2QmiEV0SYwDS/rw/stw,GzMLH+X9jUezK7QFl43dIg,,,N,0,0,,,2014-04-13 07:21,2014-04-14 16:04,admin,admin,
3398,143495,6971,40662,7842,0,N,N,N,CP_Phys,TT_Task,DT_FixedDrtn,TK_NotStart,CZA-TK-0505-1730,Welding,8389,2472,0,40,0,23.17525,23.17525,40,160,0,160,,,,2015-02-21 09:00,2015-02-25 09:00,,2014-05-08 07:00,2014-05-12 17:00,2014-05-08 07:00,2014-05-12 17:00,2014-05-08 07:00,2014-05-12 17:00,2015-02-21 09:00,2015-02-25 09:00,,PT_Normal,,,,,OzvlsKkF9kWd2Z+/5Gvycw,kEZEqx3IVUy0hifqfC+/dw,,,N,0,0,,,2014-04-13 07:21,2014-04-14 16:04,admin,admin,
3399,143496,6971,40662,7842,0,N,N,N,CP_Phys,TT_Task,DT_FixedDrtn,TK_NotStart,CZA-TK-0505-1740,Inspection,8389,2472,0,50,0,4.63505,4.63505,50,0,0,0,,,,2015-02-19 09:00,2015-02-25 09:00,,2014-05-07 07:00,2014-05-12 17:00,2014-05-07 07:00,2014-05-12 17:00,2014-05-07 07:00,2014-05-12 17:00,2015-02-19 09:00,2015-02-25 09:00,,PT_Normal,,,,,h9pwh+m2ekOBumwPwDf/vA,yEgv6QN1ikyITfDtJ2j9tw,,,N,0,0,,,2014-04-13 07:21,2014-04-14 16:04,admin,admin,
3400,143497,6971,40663,7842,0,N,N,N,CP_Phys,TT_Task,DT_FixedDrtn,TK_NotStart,CZA-TK-0505-1750,Erection and Fit-up,8389,2472,0,10,0,72.408825,72.408825,10,0,0,0,,,,2015-02-25 09:00,2015-02-26 09:00,,2014-05-13 07:00,2014-05-13 17:00,2014-05-13 07:00,2014-05-13 17:00,2014-05-13 07:00,2014-05-13 17:00,2015-02-25 09:00,2015-02-26 09:00,,PT_Normal,,,,,v9+dakKDk06cNGm+wyLTGg,MONvYVjjKUuqYQ485cvSZw,,,N,0,0,,,2014-04-13 07:21,2014-04-14 16:04,admin,admin,
3401,143498,6971,40663,7842,0,N,N,N,CP_Phys,TT_Task,DT_FixedDrtn,TK_NotStart,CZA-TK-0505-1760,Welding,8389,2472,0,40,0,90.511031,90.511031,40,160,0,160,,,,2015-02-26 09:00,2015-03-03 09:00,,2014-05-14 07:00,2014-05-18 17:00,2014-05-14 07:00,2014-05-18 17:00,2014-05-14 07:00,2014-05-18 17:00,2015-02-26 09:00,2015-03-03 09:00,,PT_Normal,,,,,MjGNMrKZkkKiiQr5+SDe7w,8EFLHEse90qGiDLO5QYAbw,,,N,0,0,,,2014-04-13 07:21,2014-04-14 16:04,admin,admin,
3402,143499,6971,40663,7842,0,N,N,N,CP_Phys,TT_Task,DT_FixedDrtn,TK_NotStart,CZA-TK-0505-1770,Inspection,8389,2472,0,50,0,18.102206,18.102206,50,0,0,0,,,,2015-02-25 09:00,2015-03-03 09:00,,2014-05-13 07:00,2014-05-18 17:00,2014-05-13 07:00,2014-05-18 17:00,2014-05-13 07:00,2014-05-18 17:00,2015-02-25 09:00,2015-03-03 09:00,,PT_Normal,,,,,AbW45aromU2XrQlEMUYOQg,Y1gC0mn7UEmZJH4Fjjf3Hg,,,N,0,0,,,2014-04-13 07:21,2014-04-14 16:04,admin,admin,
3403,143500,6971,40664,7842,0,N,N,N,CP_Phys,TT_Task,DT_FixedDrtn,TK_NotStart,CZA-TK-0505-1780,"Cutting, Installation and Fit-up",8389,2472,0,20,0,0,0,20,80,0,80,,,,2015-03-03 09:00,2015-03-05 09:00,,2014-05-19 07:00,2014-05-20 17:00,2014-05-19 07:00,2014-05-20 17:00,2014-05-19 07:00,2014-05-20 17:00,2015-03-03 09:00,2015-03-05 09:00,,PT_Normal,,,,,CciGouEzBk6m+NYK4sCEag,x3yhNJANA0C94i/gW54pzg,,,N,0,0,,,2014-04-13 07:21,2014-04-14 16:04,admin,admin,
3404,143501,6971,40664,7842,0,N,N,N,CP_Phys,TT_Task,DT_FixedDrtn,TK_NotStart,CZA-TK-0505-1790,Welding,8389,2472,0,40,0,0,0,40,160,0,160,,,,2015-03-05 09:00,2015-03-10 09:00,,2014-05-21 07:00,2014-05-25 17:00,2014-05-21 07:00,2014-05-25 17:00,2014-05-21 07:00,2014-05-25 17:00,2015-03-05 09:00,2015-03-10 09:00,,PT_Normal,,,,,C7ZRJEgxOUCuuNZhnfDpCQ,t26WYhfAckyy2vTKZBG/qA,,,N,0,0,,,2014-04-13 07:21,2014-04-14 16:04,admin,admin,
3405,143502,6971,40664,7842,0,N,N,N,CP_Phys,TT_Task,DT_FixedDrtn,TK_NotStart,CZA-TK-0505-1800,Inspection,8389,2472,0,60,0,0,0,60,0,0,0,,,,2015-03-03 09:00,2015-03-10 09:00,,2014-05-19 07:00,2014-05-25 17:00,2014-05-19 07:00,2014-05-25 17:00,2014-05-19 07:00,2014-05-25 17:00,2015-03-03 09:00,2015-03-10 09:00,,PT_Normal,,,,,IJWUUHmEq0SQqX9TLiPfuQ,3iV9KJ8kqkyKatpUqAI3oQ,,,N,0,0,,,2014-04-13 07:21,2014-04-14 16:04,admin,admin,
3406,143503,6971,40665,7842,0,N,N,N,CP_Phys,TT_Task,DT_FixedDrtn,TK_NotStart,CZA-TK-0505-1810,Erection and Fit-up,8389,2472,0,10,0,8.864939,8.864939,10,0,0,0,,,,2015-03-10 09:00,2015-03-11 09:00,,2014-05-26 07:00,2014-05-26 17:00,2014-05-26 07:00,2014-05-26 17:00,2014-05-26 07:00,2014-05-26 17:00,2015-03-10 09:00,2015-03-11 09:00,,PT_Normal,,,,,sZNi7UapQEKEJv/jrcvJzg,LJzeWIDbzU23Y3KByad3yw,,,N,0,0,,,2014-04-13 07:21,2014-04-14 16:04,admin,admin,
3407,143504,6971,40665,7842,0,N,N,N,CP_Phys,TT_Task,DT_FixedDrtn,TK_NotStart,CZA-TK-0505-1820,Welding,8389,2472,0,30,0,11.081174,11.081174,30,120,0,120,,,,2015-03-11 09:00,2015-03-15 09:00,,2014-05-27 07:00,2014-05-29 17:00,2014-05-27 07:00,2014-05-29 17:00,2014-05-27 07:00,2014-05-29 17:00,2015-03-11 09:00,2015-03-15 09:00,,PT_Normal,,,,,Ewy5eCEuMkCkqwHbxxkUVg,zxr4ndYMxUOD0AoECTfZmg,,,N,0,0,,,2014-04-13 07:21,2014-04-14 16:04,admin,admin,
3408,143505,6971,40665,7842,0,N,N,N,CP_Phys,TT_Task,DT_FixedDrtn,TK_NotStart,CZA-TK-0505-1830,Inspection,8389,2472,0,40,0,2.216235,2.216235,40,0,0,0,,,,2015-03-10 09:00,2015-03-15 09:00,,2014-05-26 07:00,2014-05-29 17:00,2014-05-26 07:00,2014-05-29 17:00,2014-05-26 07:00,2014-05-29 17:00,2015-03-10 09:00,2015-03-15 09:00,,PT_Normal,,,,,vUWG7PNmZ0+ei2x5+8Ab/w,26Djd/rpAUClYp4OK+ccKQ,,,N,0,0,,,2014-04-13 07:21,2014-04-14 16:04,admin,admin,
3409,143506,6971,40457,7842,0,N,N,N,CP_Phys,TT_Task,DT_FixedDrtn,TK_NotStart,CZA-TK-0505-1840,Laying and Fit-up,8389,2472,0,30,0,8.864939,8.864939,30,120,0,120,,,,2015-03-15 09:00,2015-03-18 09:00,,2014-05-31 07:00,2014-06-02 17:00,2014-05-31 07:00,2014-06-02 17:00,2014-05-31 07:00,2014-06-02 17:00,2015-03-15 09:00,2015-03-18 09:00,,PT_Normal,,,,,kr/iGvmE+E6LKmz86XQklw,T8Czytz+fU+D62QF7wmN2A,,,N,0,0,,,2014-04-13 07:21,2014-04-14 16:04,admin,admin,
3410,143507,6971,40457,7842,0,N,N,N,CP_Phys,TT_Task,DT_FixedDrtn,TK_NotStart,CZA-TK-0505-1850,Welding,8389,2472,0,40,0,11.081174,11.081174,40,160,0,160,,,,2015-03-18 09:00,2015-03-23 09:00,,2014-06-03 07:00,2014-06-07 17:00,2014-06-03 07:00,2014-06-07 17:00,2014-06-03 07:00,2014-06-07 17:00,2015-03-18 09:00,2015-03-23 09:00,,PT_Normal,,,,,NiSHVM0/CkahE9keJt6/Eg,sBgSt7c4skOI8HNqvAQz/Q,,,N,0,0,,,2014-04-13 07:21,2014-04-14 16:04,admin,admin,
3411,143508,6971,40457,7842,0,N,N,N,CP_Phys,TT_Task,DT_FixedDrtn,TK_NotStart,CZA-TK-0505-1860,Inspection,8389,2472,0,70,0,2.216235,2.216235,70,0,0,0,,,,2015-03-15 09:00,2015-03-23 09:00,,2014-05-31 07:00,2014-06-07 17:00,2014-05-31 07:00,2014-06-07 17:00,2014-05-31 07:00,2014-06-07 17:00,2015-03-15 09:00,2015-03-23 09:00,,PT_Normal,,,,,mfm3ioWMCkuYHmbZe5o6sA,kad+q11NeEuouowzIDYNZw,,,N,0,0,,,2014-04-13 07:21,2014-04-14 16:04,admin,admin,
3412,143509,6971,40116,7842,0,N,N,N,CP_Phys,TT_Task,DT_FixedDrtn,TK_NotStart,CZA-TK-0505-2030,"Filling, Holding and Draining of Water",8389,2472,0,110,0,1465.998304,1465.998304,110,0,0,0,,,,2015-05-17 15:00,2015-05-30 15:00,,2014-08-02 13:00,2014-08-14 13:00,2014-08-02 13:00,2014-08-14 13:00,2014-08-02 13:00,2014-08-14 13:00,2015-05-17 15:00,2015-05-30 15:00,,PT_Normal,,,,,sgH00p9sjkCbwPbX4Su+Zw,RONjGJpd6E+qBloaMO0oUg,,,N,0,0,,,2014-04-13 07:21,2014-04-14 16:04,admin,admin,
3413,143510,6971,40103,7842,0,N,N,N,CP_Phys,TT_Task,DT_FixedDrtn,TK_NotStart,CZA-TK-0505-2040,"Blasting and Painting of Bottom, Shell and Roof (Inside and Outside)",8389,2472,0,180,0,879.598982,879.598982,180,0,0,0,,,,2015-05-30 15:00,2015-06-20 15:00,,2014-08-14 13:00,2014-09-04 13:00,2014-08-14 13:00,2014-09-04 13:00,2014-08-14 13:00,2014-09-04 13:00,2015-05-30 15:00,2015-06-20 15:00,,PT_Normal,,,,,8k9yj0i61ECNC5wsqnDl8w,zFrSJ8TsyU++gzx63xwFoQ,,,N,0,0,,,2014-04-13 07:21,2014-04-14 16:04,admin,admin,
3414,143511,6971,39993,7842,0,N,N,N,CP_Phys,TT_Task,DT_FixedDrtn,TK_NotStart,CZA-TK-0520-2920,"Filling, Holding and Draining of Water",8391,2468,0,50,0,1751.64635,1751.64635,50,0,0,0,,,,2015-06-02 15:00,2015-06-08 15:00,,2014-08-19 07:00,2014-08-24 17:00,2014-08-19 07:00,2014-08-24 17:00,2014-08-19 07:00,2014-08-24 17:00,2015-06-02 15:00,2015-06-08 15:00,,PT_Normal,,,,,vRITTO4vakepafYzPYIW7g,CbPCbWhwg0W3BQdb5LRCSQ,,,N,0,0,,,2014-04-13 07:21,2014-04-14 16:04,admin,admin,
3415,143512,6971,39976,7842,0,N,N,N,CP_Phys,TT_Task,DT_FixedDrtn,TK_NotStart,CZA-TK-0520-2950,Tank Calibration,8391,2498,0,50,0,350.32927,350.32927,50,0,0,0,,,,2015-06-20 15:00,2015-06-25 15:00,,2014-09-02 07:00,2014-09-07 17:00,2014-09-02 07:00,2014-09-07 17:00,2014-09-02 07:00,2014-09-07 17:00,2015-06-20 15:00,2015-06-25 15:00,,PT_Normal,,,,,JWxNtQLkG0y6HyixpDYyRA,l7ZqZhPHbEa+ada3VogjhA,,,N,0,0,,,2014-04-13 07:21,2014-04-14 16:04,admin,admin,
3416,143513,6971,39976,7842,0,N,N,N,CP_Phys,TT_Task,DT_FixedDrtn,TK_NotStart,CZA-TK-0520-2940,Tank Handover,8391,2498,2498,20,0,350.32927,350.32927,20,0,0,0,,,,2015-06-25 15:00,2015-06-28 15:00,,2014-09-08 07:00,2014-09-09 17:00,2014-09-08 07:00,2014-09-09 17:00,2014-09-08 07:00,2014-09-09 17:00,2015-06-25 15:00,2015-06-28 15:00,,PT_Normal,,,,,MlIaAen/BUmdft8guwHP8A,cO2oZPgRpUCVv7PkhBP9Og,,,N,0,0,,,2014-04-13 07:21,2014-04-14 16:04,admin,admin,
3417,143514,6971,39977,7842,0,N,N,N,CP_Phys,TT_Task,DT_FixedDrtn,TK_NotStart,CZA-TK-0520-2510,Cutting of Roof Plates,8496,3445.5,0,20,0,0,0,20,0,0,0,,,,2015-04-09 09:00,2015-04-12 09:00,,2014-03-03 13:30,2014-03-05 13:30,2014-03-03 13:30,2014-03-05 13:30,2014-03-03 13:30,2014-03-05 13:30,2015-04-09 09:00,2015-04-12 09:00,,PT_Normal,,,,,NFEHvzeZJEGJ0IeMGhdh2g,htVCiDApAUShiuMtgaIvKw,,,N,0,0,,,2014-04-13 07:21,2014-04-14 17:03,admin,admin,
3418,143515,6971,39977,7842,0,N,N,N,CP_Phys,TT_Task,DT_FixedDrtn,TK_NotStart,CZA-TK-0520-2520,"Cutting, Fit-up and Welding of Roof Nozzles, Manholes and Other Appurtanances",8496,3445.5,0,50,0,0,0,50,0,0,0,,,,2015-04-12 09:00,2015-04-18 09:00,,2014-03-05 13:30,2014-03-11 13:30,2014-03-05 13:30,2014-03-11 13:30,2014-03-05 13:30,2014-03-11 13:30,2015-04-12 09:00,2015-04-18 09:00,,PT_Normal,,,,,p/RC1Y7zb02HwHvxao7GCw,/vKi88ocREe0JufkSrMyJw,,,N,0,0,,,2014-04-13 07:21,2014-04-14 17:03,admin,admin,
3419,143516,6971,39977,7842,0,N,N,N,CP_Phys,TT_Task,DT_FixedDrtn,TK_NotStart,CZA-TK-0520-2530,"Cutting, Fit-up and Welding of Roof Platform,Gratings and Stairway",8496,3445.5,0,70,0,0,0,70,0,0,0,,,,2015-04-15 11:00,2015-04-23 11:00,,2014-03-09 15:30,2014-03-17 15:30,2014-03-09 15:30,2014-03-17 15:30,2014-03-09 15:30,2014-03-17 15:30,2015-04-15 11:00,2015-04-23 11:00,,PT_Normal,,,,,Lsab8cBU/kONRSQEA410/w,YOwNB9ruyEesbchM+zY1XQ,,,N,0,0,,,2014-04-13 07:21,2014-04-14 17:03,admin,admin,
3420,143517,6971,39977,7842,0,N,N,N,CP_Phys,TT_Task,DT_FixedDrtn,TK_NotStart,CZA-TK-0520-2540,"Cutting, Fit-up and Welding of Stairway Platform, Gratings and Handrails",8496,3445.5,963.5,70,0,0,0,70,0,0,0,,,,2015-04-18 15:00,2015-04-26 15:00,,2014-03-12 09:30,2014-03-20 09:30,2014-03-12 09:30,2014-03-20 09:30,2014-03-12 09:30,2014-03-20 09:30,2015-04-18 15:00,2015-04-26 15:00,,PT_Normal,,,,,ziVnyjSVBU6/x2zkHKFhuA,tf0hY+JZy0uYNv1tsKi2Bg,,,N,0,0,,,2014-04-13 07:21,2014-04-14 17:03,admin,admin,
3421,143518,6971,39977,7842,0,N,N,N,CP_Phys,TT_Task,DT_FixedDrtn,TK_NotStart,CZA-TK-0520-2150,Cutting of Annular Plate,8496,2922,0,10,0,71.7111,71.7111,10,0,0,0,,,,2015-01-15 09:00,2015-01-17 09:00,,2014-02-09 07:00,2014-02-09 17:00,2014-02-09 07:00,2014-02-09 17:00,2014-02-09 07:00,2014-02-09 17:00,2015-01-15 09:00,2015-01-17 09:00,,PT_Normal,,,,,oNpwyBAnbEya06zwVPBjKQ,oH3lxeONv0aerTDn511FWA,,,N,0,0,,,2014-04-13 07:21,2014-04-14 17:03,admin,admin,
3422,143519,6971,39977,7842,0,N,N,N,CP_Phys,TT_Task,DT_FixedDrtn,TK_NotStart,CZA-TK-0520-2160,Cutting of Bottom Plates,8496,3445.5,0,10,0,207.4887,207.4887,10,0,0,0,,,,2015-03-18 12:30,2015-03-19 12:30,,2014-02-10 07:00,2014-02-10 17:00,2014-02-10 07:00,2014-02-10 17:00,2014-02-10 07:00,2014-02-10 17:00,2015-03-18 12:30,2015-03-19 12:30,,PT_Normal,,,,,YGb3F8BmnUesv8VLFZC95A,vfkTv0Jbdkm1Mlfye6YVeQ,,,N,0,0,,,2014-04-13 07:21,2014-04-14 17:03,admin,admin,
3423,143520,6971,39977,7842,0,N,N,N,CP_Phys,TT_Task,DT_FixedDrtn,TK_NotStart,CZA-TK-0520-2170,"Cutting, Bevelling & Rolling of Shell No.1",8496,3445.5,0,10,0,370.3176,370.3176,10,0,0,0,,,,2015-03-19 12:30,2015-03-21 12:30,,2014-02-11 07:00,2014-02-11 17:00,2014-02-11 07:00,2014-02-11 17:00,2014-02-11 07:00,2014-02-11 17:00,2015-03-19 12:30,2015-03-21 12:30,,PT_Normal,,,,,RWd3UID22UupDuldrnnuQg,ltErzAjaYEGxaeCLt1RyEQ,,,N,0,0,,,2014-04-13 07:21,2014-04-14 17:03,admin,admin,
3424,143521,6971,39977,7842,0,N,N,N,CP_Phys,TT_Task,DT_FixedDrtn,TK_NotStart,CZA-TK-0520-2180,"Cutting, Bevelling & Rolling of Shell No.2",8496,3445.5,0,10,0,42.7428,42.7428,10,0,0,0,,,,2015-03-19 12:30,2015-03-21 12:30,,2014-02-11 07:00,2014-02-11 17:00,2014-02-11 07:00,2014-02-11 17:00,2014-02-11 07:00,2014-02-11 17:00,2015-03-19 12:30,2015-03-21 12:30,,PT_Normal,,,,,BzFDxgKA5Eeu5NsCnAtl/g,ir5ZHA4iAE+aGKoDsSH2jw,,,N,0,0,,,2014-04-13 07:21,2014-04-14 17:03,admin,admin,
3425,143522,6971,39977,7842,0,N,N,N,CP_Phys,TT_Task,DT_FixedDrtn,TK_NotStart,CZA-TK-0520-2190,"Cutting, Fit-up and Welding of Shell Nozzles,Manholes and Other Appurtanances",8496,3445.5,0,50,0,0,0,50,0,0,0,,,,2015-03-19 12:30,2015-03-25 12:30,,2014-02-11 07:00,2014-02-16 17:00,2014-02-11 07:00,2014-02-16 17:00,2014-02-11 07:00,2014-02-16 17:00,2015-03-19 12:30,2015-03-25 12:30,,PT_Normal,,,,,ISbIfa5uqU24C/ZVbNzUwg,h+cGPtQhkkO1ywYr3weJmA,,,N,0,0,,,2014-04-13 07:21,2014-04-14 17:03,admin,admin,
3426,143523,6971,39977,7842,0,N,N,N,CP_Phys,TT_Task,DT_FixedDrtn,TK_NotStart,CZA-TK-0520-2200,Cutting of Floating Deck Plate,8496,3445.5,0,10,0,479.67,479.67,10,0,0,0,,,,2015-03-25 12:30,2015-03-26 12:30,,2014-02-17 07:00,2014-02-17 17:00,2014-02-17 07:00,2014-02-17 17:00,2014-02-17 07:00,2014-02-17 17:00,2015-03-25 12:30,2015-03-26 12:30,,PT_Normal,,,,,Y2Q5JVDdIEetAzSBvKd4kA,eP8iqrdhcEelyUlygLp4JA,,,N,0,0,,,2014-04-13 07:21,2014-04-14 17:03,admin,admin,
3427,143524,6971,39977,7842,0,N,N,N,CP_Phys,TT_Task,DT_FixedDrtn,TK_NotStart,CZA-TK-0520-2210,"Cutting,Fit up and Welding of Pontoon",8496,3445.5,0,10,0,48.9,48.9,10,0,0,0,,,,2015-03-26 12:30,2015-03-28 12:30,,2014-02-18 07:00,2014-02-18 17:00,2014-02-18 07:00,2014-02-18 17:00,2014-02-18 07:00,2014-02-18 17:00,2015-03-26 12:30,2015-03-28 12:30,,PT_Normal,,,,,FhXd9wJqrkOT29KW8WijQA,hpe9gKUM/UCMK/hPEWGq3g,,,N,0,0,,,2014-04-13 07:21,2014-04-14 17:03,admin,admin,
3428,143525,6971,39977,7842,0,N,N,N,CP_Phys,TT_Task,DT_FixedDrtn,TK_NotStart,CZA-TK-0520-2220,Cutting of Floating Legs and Manholes,8496,3445.5,0,10,0,0,0,10,0,0,0,,,,2015-03-28 12:30,2015-03-29 12:30,,2014-02-19 07:00,2014-02-19 17:00,2014-02-19 07:00,2014-02-19 17:00,2014-02-19 07:00,2014-02-19 17:00,2015-03-28 12:30,2015-03-29 12:30,,PT_Normal,,,,,yjXhLDGxO0+BDrNJM4nlpA,P+AmRxign0e9PqT64US7hg,,,N,0,0,,,2014-04-13 07:21,2014-04-14 17:03,admin,admin,
3429,143526,6971,39977,7842,0,N,N,N,CP_Phys,TT_Task,DT_FixedDrtn,TK_NotStart,CZA-TK-0520-2230,"Cutting, Bevelling & Rolling of Shell No.3",8496,3445.5,0,10,0,0,0,10,0,0,0,,,,2015-03-29 12:30,2015-03-30 12:30,,2014-02-20 07:00,2014-02-20 17:00,2014-02-20 07:00,2014-02-20 17:00,2014-02-20 07:00,2014-02-20 17:00,2015-03-29 12:30,2015-03-30 12:30,,PT_Normal,,,,,asGHKQHTgkSv+B/LvrUOZA,tLNQ2xlRN0uu0MTNe0PBbg,,,N,0,0,,,2014-04-13 07:21,2014-04-14 17:03,admin,admin,
3430,143527,6971,39977,7842,0,N,N,N,CP_Phys,TT_Task,DT_FixedDrtn,TK_NotStart,CZA-TK-0520-2240,"Cutting, Bevelling & Rolling of Shell No.4",8496,3445.5,0,10,0,0,0,10,0,0,0,,,,2015-03-29 12:30,2015-03-30 12:30,,2014-02-20 07:00,2014-02-20 17:00,2014-02-20 07:00,2014-02-20 17:00,2014-02-20 07:00,2014-02-20 17:00,2015-03-29 12:30,2015-03-30 12:30,,PT_Normal,,,,,5ROCTccXs0+uxI+EL/CgKw,dy5KIPjnMU6BOwM4RCWhOw,,,N,0,0,,,2014-04-13 07:21,2014-04-14 17:03,admin,admin,
3431,143528,6971,39977,7842,0,N,N,N,CP_Phys,TT_Task,DT_FixedDrtn,TK_NotStart,CZA-TK-0520-2250,"Cutting, Bevelling & Rolling of Shell No.5",8496,3445.5,0,10,0,370.3176,370.3176,10,0,0,0,,,,2015-03-30 12:30,2015-03-31 12:30,,2014-02-22 07:00,2014-02-22 17:00,2014-02-22 07:00,2014-02-22 17:00,2014-02-22 07:00,2014-02-22 17:00,2015-03-30 12:30,2015-03-31 12:30,,PT_Normal,,,,,SgwuIwL110a5PnfTLVwpsg,T0vVNfETrEKzF1fqywi2Vg,,,N,0,0,,,2014-04-13 07:21,2014-04-14 17:03,admin,admin,
3432,143529,6971,39977,7842,0,N,N,N,CP_Phys,TT_Task,DT_FixedDrtn,TK_NotStart,CZA-TK-0520-2260,"Cutting, Bevelling & Rolling of Shell No.6",8496,3445.5,0,12.5,0,105.5217,105.5217,12.5,0,0,0,,,,2015-03-31 12:30,2015-04-01 15:00,,2014-02-23 07:00,2014-02-24 09:30,2014-02-23 07:00,2014-02-24 09:30,2014-02-23 07:00,2014-02-24 09:30,2015-03-31 12:30,2015-04-01 15:00,,PT_Normal,,,,,5fw9niYzb0eiMBtn5iYtFA,vQWJ5ZOEUUym16VFAc7Ckw,,,N,0,0,,,2014-04-13 07:21,2014-04-14 17:03,admin,admin,
3433,143530,6971,39977,7842,0,N,N,N,CP_Phys,TT_Task,DT_FixedDrtn,TK_NotStart,CZA-TK-0520-2280,"Cutting, Bevelling & Rolling of Curb Angle",8496,3445.5,0,20,0,8.4999,8.4999,20,0,0,0,,,,2015-04-01 15:00,2015-04-04 15:00,,2014-02-24 09:30,2014-02-26 09:30,2014-02-24 09:30,2014-02-26 09:30,2014-02-24 09:30,2014-02-26 09:30,2015-04-01 15:00,2015-04-04 15:00,,PT_Normal,,,,,7On+/xojZUGwbHwr6nfSAw,OlBHUymI0EeSTMCp4QTfhQ,,,N,0,0,,,2014-04-13 07:21,2014-04-14 17:03,admin,admin,
3434,143531,6971,39977,7842,0,N,N,N,CP_Phys,TT_Task,DT_FixedDrtn,TK_NotStart,CZA-TK-0520-2290,"Cutting, Fit-up and Welding of Roof Structure",8496,3445.5,0,40,0,180.39,180.39,40,0,0,0,,,,2015-04-05 09:00,2015-04-09 09:00,,2014-02-26 13:30,2014-03-03 13:30,2014-02-26 13:30,2014-03-03 13:30,2014-02-26 13:30,2014-03-03 13:30,2015-04-05 09:00,2015-04-09 09:00,,PT_Normal,,,,,4OxO/RWAnUCfiCi/zUoYgw,qX214z0hxkuAw5ndOc23yA,,,N,0,0,,,2014-04-13 07:21,2014-04-14 17:03,admin,admin,
3435,143532,6971,40465,7842,0,N,N,N,CP_Phys,TT_Task,DT_FixedDrtn,TK_NotStart,CZA-TK-0520-2570,Erection and Fit-up,8391,2482,0,10,0,0,0,10,20,0,20,,,,2015-03-08 15:00,2015-03-09 15:00,,2014-05-22 13:00,2014-05-24 13:00,2014-05-22 13:00,2014-05-24 13:00,2014-05-22 13:00,2014-05-24 13:00,2015-03-08 15:00,2015-03-09 15:00,,PT_Normal,,,,,VqutmR/qZU+w8Jjraxcfhg,NVEeZSJDLEWk1e0h5aL54g,,,N,0,0,,,2014-04-13 07:21,2014-04-14 16:04,admin,admin,
3436,143533,6971,40465,7842,0,N,N,N,CP_Phys,TT_Task,DT_FixedDrtn,TK_NotStart,CZA-TK-0520-2580,Welding,8391,2482,0,30,0,0,0,30,60,0,60,,,,2015-03-09 15:00,2015-03-12 15:00,,2014-05-24 13:00,2014-05-27 13:00,2014-05-24 13:00,2014-05-27 13:00,2014-05-24 13:00,2014-05-27 13:00,2015-03-09 15:00,2015-03-12 15:00,,PT_Normal,,,,,XnJt+MipFESHkKlvud59FA,GiO2zE440EeGPK5xKVG0Cw,,,N,0,0,,,2014-04-13 07:21,2014-04-14 16:04,admin,admin,
3437,143534,6971,40465,7842,0,N,N,N,CP_Phys,TT_Task,DT_FixedDrtn,TK_NotStart,CZA-TK-0520-2590,Inspection,8391,2482,0,40,0,0,0,40,0,0,0,,,,2015-03-08 15:00,2015-03-12 15:00,,2014-05-22 13:00,2014-05-27 13:00,2014-05-22 13:00,2014-05-27 13:00,2014-05-22 13:00,2014-05-27 13:00,2015-03-08 15:00,2015-03-12 15:00,,PT_Normal,,,,,+1TCZjLgkECphrK7FWbjtQ,wmZAFy7RzU6sipJWN8RpVg,,,N,0,0,,,2014-04-13 07:21,2014-04-14 16:04,admin,admin,
3438,143535,6971,40466,7842,0,N,N,N,CP_Phys,TT_Task,DT_FixedDrtn,TK_NotStart,CZA-TK-0520-2600,Erection and Fit-up,8391,2482,0,10,0,0,0,10,20,0,20,,,,2015-03-12 15:00,2015-03-14 15:00,,2014-05-27 13:00,2014-05-28 13:00,2014-05-27 13:00,2014-05-28 13:00,2014-05-27 13:00,2014-05-28 13:00,2015-03-12 15:00,2015-03-14 15:00,,PT_Normal,,,,,rw2mGCDL80iTSyL2d9mXjA,ze1Ft+1Lbkq/DImoemNKJg,,,N,0,0,,,2014-04-13 07:21,2014-04-14 16:04,admin,admin,
3439,143536,6971,40466,7842,0,N,N,N,CP_Phys,TT_Task,DT_FixedDrtn,TK_NotStart,CZA-TK-0520-2610,Welding,8391,2482,0,30,0,0,0,30,60,0,60,,,,2015-03-14 15:00,2015-03-17 15:00,,2014-05-28 13:00,2014-06-01 13:00,2014-05-28 13:00,2014-06-01 13:00,2014-05-28 13:00,2014-06-01 13:00,2015-03-14 15:00,2015-03-17 15:00,,PT_Normal,,,,,Uu/lJSRwc0Oy5OFhlqFFmg,XQPt4p8YQUmWhMXQekjvUw,,,N,0,0,,,2014-04-13 07:21,2014-04-14 16:04,admin,admin,
3440,143537,6971,40466,7842,0,N,N,N,CP_Phys,TT_Task,DT_FixedDrtn,TK_NotStart,CZA-TK-0520-2620,Inspection,8391,2482,0,40,0,0,0,40,0,0,0,,,,2015-03-12 15:00,2015-03-17 15:00,,2014-05-27 13:00,2014-06-01 13:00,2014-05-27 13:00,2014-06-01 13:00,2014-05-27 13:00,2014-06-01 13:00,2015-03-12 15:00,2015-03-17 15:00,,PT_Normal,,,,,j/Z9Y5hcOkKqMIgKbnS6Ng,VnKhByb3tEeljQAd1IuPSQ,,,N,0,0,,,2014-04-13 07:21,2014-04-14 16:04,admin,admin,
3441,143538,6971,40467,7842,0,N,N,N,CP_Phys,TT_Task,DT_FixedDrtn,TK_NotStart,CZA-TK-0520-2630,Erection and Fit-up,8391,2482,0,10,0,162.115707,162.115707,10,0,0,0,,,,2015-03-17 15:00,2015-03-18 15:00,,2014-06-01 13:00,2014-06-02 13:00,2014-06-01 13:00,2014-06-02 13:00,2014-06-01 13:00,2014-06-02 13:00,2015-03-17 15:00,2015-03-18 15:00,,PT_Normal,,,,,WgMAwkCqsESKaJmil6hvnw,GzMLH+X9jUezK7QFl43dIg,,,N,0,0,,,2014-04-13 07:21,2014-04-14 16:04,admin,admin,
3442,143539,6971,40467,7842,0,N,N,N,CP_Phys,TT_Task,DT_FixedDrtn,TK_NotStart,CZA-TK-0520-2640,Welding,8391,2482,0,30,0,202.644634,202.644634,30,60,0,60,,,,2015-03-18 15:00,2015-03-22 15:00,,2014-06-02 13:00,2014-06-05 13:00,2014-06-02 13:00,2014-06-05 13:00,2014-06-02 13:00,2014-06-05 13:00,2015-03-18 15:00,2015-03-22 15:00,,PT_Normal,,,,,eYFOiXdS106XLuoodEU6eQ,kEZEqx3IVUy0hifqfC+/dw,,,N,0,0,,,2014-04-13 07:21,2014-04-14 16:04,admin,admin,
3443,143540,6971,40467,7842,0,N,N,N,CP_Phys,TT_Task,DT_FixedDrtn,TK_NotStart,CZA-TK-0520-2650,Inspection,8391,2482,0,40,0,40.528927,40.528927,40,0,0,0,,,,2015-03-17 15:00,2015-03-22 15:00,,2014-06-01 13:00,2014-06-05 13:00,2014-06-01 13:00,2014-06-05 13:00,2014-06-01 13:00,2014-06-05 13:00,2015-03-17 15:00,2015-03-22 15:00,,PT_Normal,,,,,oRh996X8+Eij00A7gFHY/g,yEgv6QN1ikyITfDtJ2j9tw,,,N,0,0,,,2014-04-13 07:21,2014-04-14 16:04,admin,admin,
3444,143541,6971,40468,7842,0,N,N,N,CP_Phys,TT_Task,DT_FixedDrtn,TK_NotStart,CZA-TK-0520-2660,Erection and Fit-up,8391,2482,0,10,0,46.194739,46.194739,10,0,0,0,,,,2015-03-22 15:00,2015-03-23 15:00,,2014-06-05 13:00,2014-06-07 13:00,2014-06-05 13:00,2014-06-07 13:00,2014-06-05 13:00,2014-06-07 13:00,2015-03-22 15:00,2015-03-23 15:00,,PT_Normal,,,,,WKZ5XzGP6U23qHAo9Gc4LQ,MONvYVjjKUuqYQ485cvSZw,,,N,0,0,,,2014-04-13 07:21,2014-04-14 16:04,admin,admin,
3445,143542,6971,40468,7842,0,N,N,N,CP_Phys,TT_Task,DT_FixedDrtn,TK_NotStart,CZA-TK-0520-2670,Welding,8391,2482,0,30,0,57.743424,57.743424,30,60,0,60,,,,2015-03-23 15:00,2015-03-26 15:00,,2014-06-07 13:00,2014-06-10 13:00,2014-06-07 13:00,2014-06-10 13:00,2014-06-07 13:00,2014-06-10 13:00,2015-03-23 15:00,2015-03-26 15:00,,PT_Normal,,,,,7wSsfilyJkm0cIJGnEyX7g,8EFLHEse90qGiDLO5QYAbw,,,N,0,0,,,2014-04-13 07:21,2014-04-14 16:04,admin,admin,
3446,143543,6971,40468,7842,0,N,N,N,CP_Phys,TT_Task,DT_FixedDrtn,TK_NotStart,CZA-TK-0520-2680,Inspection,8391,2482,0,40,0,11.548685,11.548685,40,0,0,0,,,,2015-03-22 15:00,2015-03-26 15:00,,2014-06-05 13:00,2014-06-10 13:00,2014-06-05 13:00,2014-06-10 13:00,2014-06-05 13:00,2014-06-10 13:00,2015-03-22 15:00,2015-03-26 15:00,,PT_Normal,,,,,Fz/iUVPDmUywtnbaJLsjwg,Y1gC0mn7UEmZJH4Fjjf3Hg,,,N,0,0,,,2014-04-13 07:21,2014-04-14 16:04,admin,admin,
3447,143544,6971,40469,7842,0,N,N,N,CP_Phys,TT_Task,DT_FixedDrtn,TK_NotStart,CZA-TK-0520-2690,"Cutting, Installation and Fit-up",8391,2482,0,20,0,0,0,20,40,0,40,,,,2015-03-26 15:00,2015-03-29 15:00,,2014-06-10 13:00,2014-06-12 13:00,2014-06-10 13:00,2014-06-12 13:00,2014-06-10 13:00,2014-06-12 13:00,2015-03-26 15:00,2015-03-29 15:00,,PT_Normal,,,,,kcFr0XXa4kKoumFrQKxr4A,x3yhNJANA0C94i/gW54pzg,,,N,0,0,,,2014-04-13 07:21,2014-04-14 16:04,admin,admin,
3448,143545,6971,40469,7842,0,N,N,N,CP_Phys,TT_Task,DT_FixedDrtn,TK_NotStart,CZA-TK-0520-2700,Welding,8391,2482,0,40,0,0,0,40,80,0,80,,,,2015-03-29 15:00,2015-04-02 15:00,,2014-06-12 13:00,2014-06-17 13:00,2014-06-12 13:00,2014-06-17 13:00,2014-06-12 13:00,2014-06-17 13:00,2015-03-29 15:00,2015-04-02 15:00,,PT_Normal,,,,,MiRXGdS/rkO5skmxGPlfVA,t26WYhfAckyy2vTKZBG/qA,,,N,0,0,,,2014-04-13 07:21,2014-04-14 16:04,admin,admin,
3449,143546,6971,40469,7842,0,N,N,N,CP_Phys,TT_Task,DT_FixedDrtn,TK_NotStart,CZA-TK-0520-2710,Inspection,8391,2482,0,60,0,0,0,60,0,0,0,,,,2015-03-26 15:00,2015-04-02 15:00,,2014-06-10 13:00,2014-06-17 13:00,2014-06-10 13:00,2014-06-17 13:00,2014-06-10 13:00,2014-06-17 13:00,2015-03-26 15:00,2015-04-02 15:00,,PT_Normal,,,,,KlSSYOBFbkqABz+b/XuzkQ,3iV9KJ8kqkyKatpUqAI3oQ,,,N,0,0,,,2014-04-13 07:21,2014-04-14 16:04,admin,admin,
3450,143547,6971,40470,7842,0,N,N,N,CP_Phys,TT_Task,DT_FixedDrtn,TK_NotStart,CZA-TK-0520-2720,Erection and Fit-up,8391,2482,0,10,0,3.721042,3.721042,10,0,0,0,,,,2015-04-02 15:00,2015-04-04 15:00,,2014-06-17 13:00,2014-06-18 13:00,2014-06-17 13:00,2014-06-18 13:00,2014-06-17 13:00,2014-06-18 13:00,2015-04-02 15:00,2015-04-04 15:00,,PT_Normal,,,,,z3zLIQYUNESZr/T7k9QsgA,LJzeWIDbzU23Y3KByad3yw,,,N,0,0,,,2014-04-13 07:21,2014-04-14 16:04,admin,admin,
3451,143548,6971,40470,7842,0,N,N,N,CP_Phys,TT_Task,DT_FixedDrtn,TK_NotStart,CZA-TK-0520-2730,Welding,8391,2482,0,30,0,4.651302,4.651302,30,60,0,60,,,,2015-04-04 15:00,2015-04-07 15:00,,2014-06-18 13:00,2014-06-22 13:00,2014-06-18 13:00,2014-06-22 13:00,2014-06-18 13:00,2014-06-22 13:00,2015-04-04 15:00,2015-04-07 15:00,,PT_Normal,,,,,2NjpMCliG0un0y9dBuiqYg,zxr4ndYMxUOD0AoECTfZmg,,,N,0,0,,,2014-04-13 07:21,2014-04-14 16:04,admin,admin,
3452,143549,6971,40470,7842,0,N,N,N,CP_Phys,TT_Task,DT_FixedDrtn,TK_NotStart,CZA-TK-0520-2740,Inspection,8391,2482,0,40,0,0.93026,0.93026,40,0,0,0,,,,2015-04-02 15:00,2015-04-07 15:00,,2014-06-17 13:00,2014-06-22 13:00,2014-06-17 13:00,2014-06-22 13:00,2014-06-17 13:00,2014-06-22 13:00,2015-04-02 15:00,2015-04-07 15:00,,PT_Normal,,,,,NZSYTwZmBEajzxT8frW8mQ,26Djd/rpAUClYp4OK+ccKQ,,,N,0,0,,,2014-04-13 07:21,2014-04-14 16:04,admin,admin,
3453,143550,6971,40471,7842,0,N,N,N,CP_Phys,TT_Task,DT_FixedDrtn,TK_NotStart,CZA-TK-0520-2750,Laying and Fit-up,8391,2482,0,20,0,78.970193,78.970193,20,40,0,40,,,,2015-04-07 15:00,2015-04-09 15:00,,2014-06-22 13:00,2014-06-24 13:00,2014-06-22 13:00,2014-06-24 13:00,2014-06-22 13:00,2014-06-24 13:00,2015-04-07 15:00,2015-04-09 15:00,,PT_Normal,,,,,X/59q6YoHkqbR9cbtYcpCA,T8Czytz+fU+D62QF7wmN2A,,,N,0,0,,,2014-04-13 07:21,2014-04-14 16:04,admin,admin,
3454,143551,6971,40471,7842,0,N,N,N,CP_Phys,TT_Task,DT_FixedDrtn,TK_NotStart,CZA-TK-0520-2760,Welding,8391,2482,0,30,0,98.712741,98.712741,30,60,0,60,,,,2015-04-09 15:00,2015-04-13 15:00,,2014-06-24 13:00,2014-06-28 13:00,2014-06-24 13:00,2014-06-28 13:00,2014-06-24 13:00,2014-06-28 13:00,2015-04-09 15:00,2015-04-13 15:00,,PT_Normal,,,,,HckdVm3zeE2xitTyinxyug,sBgSt7c4skOI8HNqvAQz/Q,,,N,0,0,,,2014-04-13 07:21,2014-04-14 16:04,admin,admin,
3455,143552,6971,40471,7842,0,N,N,N,CP_Phys,TT_Task,DT_FixedDrtn,TK_NotStart,CZA-TK-0520-2770,Inspection,8391,2482,0,50,0,19.742548,19.742548,50,0,0,0,,,,2015-04-07 15:00,2015-04-13 15:00,,2014-06-22 13:00,2014-06-28 13:00,2014-06-22 13:00,2014-06-28 13:00,2014-06-22 13:00,2014-06-28 13:00,2015-04-07 15:00,2015-04-13 15:00,,PT_Normal,,,,,vFvwm49jlUiG0MoCk+GesA,kad+q11NeEuouowzIDYNZw,,,N,0,0,,,2014-04-13 07:21,2014-04-14 16:04,admin,admin,
3456,143553,6971,40472,7842,0,N,N,N,CP_Phys,TT_Task,DT_FixedDrtn,TK_NotStart,CZA-TK-0520-2780,Laying and Fit-up,8391,2482,0,10,0,78.970193,78.970193,10,20,0,20,,,,2015-04-13 15:00,2015-04-14 15:00,,2014-06-28 13:00,2014-06-29 13:00,2014-06-28 13:00,2014-06-29 13:00,2014-06-28 13:00,2014-06-29 13:00,2015-04-13 15:00,2015-04-14 15:00,,PT_Normal,,,,,D5Oy+LsZbUG5vJ2GseSGcQ,Ixff7RwhPU+cUOPmGqMEGg,,,N,0,0,,,2014-04-13 07:21,2014-04-14 16:04,admin,admin,
3457,143554,6971,40472,7842,0,N,N,N,CP_Phys,TT_Task,DT_FixedDrtn,TK_NotStart,CZA-TK-0520-2790,Welding,8391,2482,0,30,0,98.712741,98.712741,30,60,0,60,,,,2015-04-14 15:00,2015-04-18 15:00,,2014-06-29 13:00,2014-07-02 13:00,2014-06-29 13:00,2014-07-02 13:00,2014-06-29 13:00,2014-07-02 13:00,2015-04-14 15:00,2015-04-18 15:00,,PT_Normal,,,,,K0IHZBhQA0amyhm3pTjhDw,NrnzL0Iua0CNMAv+IDhizw,,,N,0,0,,,2014-04-13 07:21,2014-04-14 16:04,admin,admin,
3458,143555,6971,40472,7842,0,N,N,N,CP_Phys,TT_Task,DT_FixedDrtn,TK_NotStart,CZA-TK-0520-2800,Inspection,8391,2482,0,40,0,19.742548,19.742548,40,0,0,0,,,,2015-04-13 15:00,2015-04-18 15:00,,2014-06-28 13:00,2014-07-02 13:00,2014-06-28 13:00,2014-07-02 13:00,2014-06-28 13:00,2014-07-02 13:00,2015-04-13 15:00,2015-04-18 15:00,,PT_Normal,,,,,Jryb/Oh9y0aDoGVClyVBKA,tLifSI/P0UCu994ej5XccA,,,N,0,0,,,2014-04-13 07:21,2014-04-14 16:04,admin,admin,
3459,143556,6971,40473,7842,0,N,N,N,CP_Phys,TT_Task,DT_FixedDrtn,TK_NotStart,CZA-TK-0520-2810,Installation and Fit-up,8391,2482,0,20,0,0,0,20,40,0,40,,,,2015-04-18 15:00,2015-04-20 15:00,,2014-07-02 13:00,2014-07-05 13:00,2014-07-02 13:00,2014-07-05 13:00,2014-07-02 13:00,2014-07-05 13:00,2015-04-18 15:00,2015-04-20 15:00,,PT_Normal,,,,,Ko69t0yZuEewb1ppK8rrIw,EqQORZYcK0yUlivMSPgB5g,,,N,0,0,,,2014-04-13 07:21,2014-04-14 16:04,admin,admin,
3460,143557,6971,40473,7842,0,N,N,N,CP_Phys,TT_Task,DT_FixedDrtn,TK_NotStart,CZA-TK-0520-2820,Welding,8391,2482,0,50,0,0,0,50,100,0,100,,,,2015-04-20 15:00,2015-04-26 15:00,,2014-07-05 13:00,2014-07-10 13:00,2014-07-05 13:00,2014-07-10 13:00,2014-07-05 13:00,2014-07-10 13:00,2015-04-20 15:00,2015-04-26 15:00,,PT_Normal,,,,,VgTrYlOuJUi0pOBa/eLMNw,g2V4SVftSUueYGMnAU07WA,,,N,0,0,,,2014-04-13 07:21,2014-04-14 16:04,admin,admin,
3461,143558,6971,40473,7842,0,N,N,N,CP_Phys,TT_Task,DT_FixedDrtn,TK_NotStart,CZA-TK-0520-2830,Inspection,8391,2482,0,70,0,0,0,70,0,0,0,,,,2015-04-18 15:00,2015-04-26 15:00,,2014-07-02 13:00,2014-07-10 13:00,2014-07-02 13:00,2014-07-10 13:00,2014-07-02 13:00,2014-07-10 13:00,2015-04-18 15:00,2015-04-26 15:00,,PT_Normal,,,,,fLJrQkI7yEiQaBouvB38ug,XJlSdAU7MUeLxfSc1zGZTA,,,N,0,0,,,2014-04-13 07:21,2014-04-14 16:04,admin,admin,
3462,143559,6971,40474,7842,0,N,N,N,CP_Phys,TT_Task,DT_FixedDrtn,TK_NotStart,CZA-TK-0520-2840,Erection and Fit-up,8391,2482,0,40,0,0,0,40,80,0,80,,,,2015-04-26 15:00,2015-04-30 15:00,,2014-07-10 13:00,2014-07-15 13:00,2014-07-10 13:00,2014-07-15 13:00,2014-07-10 13:00,2014-07-15 13:00,2015-04-26 15:00,2015-04-30 15:00,,PT_Normal,,,,,qqnT/IVd3EenB/gMpTy5/A,apejBvbWikStf5lTmYEaRQ,,,N,0,0,,,2014-04-13 07:21,2014-04-14 16:04,admin,admin,
3463,143560,6971,40474,7842,0,N,N,N,CP_Phys,TT_Task,DT_FixedDrtn,TK_NotStart,CZA-TK-0520-2850,Welding,8391,2482,0,100,0,0,0,100,200,0,200,,,,2015-04-30 15:00,2015-05-12 15:00,,2014-07-15 13:00,2014-07-27 13:00,2014-07-15 13:00,2014-07-27 13:00,2014-07-15 13:00,2014-07-27 13:00,2015-04-30 15:00,2015-05-12 15:00,,PT_Normal,,,,,NmssDpd0KE6IuXVGGTic9Q,JDElMGCSHkW8Bx5e1X9pdw,,,N,0,0,,,2014-04-13 07:21,2014-04-14 16:04,admin,admin,
3464,143561,6971,40474,7842,0,N,N,N,CP_Phys,TT_Task,DT_FixedDrtn,TK_NotStart,CZA-TK-0520-2860,Inspection,8391,2482,0,140,0,0,0,140,0,0,0,,,,2015-04-26 15:00,2015-05-12 15:00,,2014-07-10 13:00,2014-07-27 13:00,2014-07-10 13:00,2014-07-27 13:00,2014-07-10 13:00,2014-07-27 13:00,2015-04-26 15:00,2015-05-12 15:00,,PT_Normal,,,,,mU01I823qk+IE/roBDh2Sg,oW42OAgvOEWOnRpbWasWhA,,,N,0,0,,,2014-04-13 07:21,2014-04-14 16:04,admin,admin,
3465,143562,6971,40475,7842,0,N,N,N,CP_Phys,TT_Task,DT_FixedDrtn,TK_NotStart,CZA-TK-0520-2870,Erection and Fit-up,8391,2482,0,40,0,0,0,40,80,0,80,,,,2015-05-12 15:00,2015-05-17 15:00,,2014-07-27 13:00,2014-07-31 13:00,2014-07-27 13:00,2014-07-31 13:00,2014-07-27 13:00,2014-07-31 13:00,2015-05-12 15:00,2015-05-17 15:00,,PT_Normal,,,,,VvX6+XsULkelPfQq+GF1Ag,C0Yz7Swju0O6ILZsortJAg,,,N,0,0,,,2014-04-13 07:21,2014-04-14 16:04,admin,admin,
3466,143563,6971,40475,7842,0,N,N,N,CP_Phys,TT_Task,DT_FixedDrtn,TK_NotStart,CZA-TK-0520-2880,Welding,8391,2482,0,100,0,0,0,100,200,0,200,,,,2015-05-17 15:00,2015-05-28 15:00,,2014-07-31 13:00,2014-08-12 13:00,2014-07-31 13:00,2014-08-12 13:00,2014-07-31 13:00,2014-08-12 13:00,2015-05-17 15:00,2015-05-28 15:00,,PT_Normal,,,,,6S14g2wV8UKWOmFjFtOpjg,LArhW7GYhkiS//RubGrwnw,,,N,0,0,,,2014-04-13 07:21,2014-04-14 16:04,admin,admin,
3467,143564,6971,40475,7842,0,N,N,N,CP_Phys,TT_Task,DT_FixedDrtn,TK_NotStart,CZA-TK-0520-2890,Inspection,8391,2482,0,140,0,0,0,140,0,0,0,,,,2015-05-12 15:00,2015-05-28 15:00,,2014-07-27 13:00,2014-08-12 13:00,2014-07-27 13:00,2014-08-12 13:00,2014-07-27 13:00,2014-08-12 13:00,2015-05-12 15:00,2015-05-28 15:00,,PT_Normal,,,,,jp+H6U+laEmjoq0Gz29V4Q,+e22TGbXtkiRw3LKmnxUyw,,,N,0,0,,,2014-04-13 07:21,2014-04-14 16:04,admin,admin,
3468,143565,6971,40476,7842,0,N,N,N,CP_Phys,TT_Task,DT_FixedDrtn,TK_NotStart,CZA-TK-0520-2900,Installation of Primary and Secondary Seal,8391,2482,0,30,0,0,0,30,0,0,0,,,,2015-05-28 15:00,2015-06-01 15:00,,2014-08-12 13:00,2014-08-16 13:00,2014-08-12 13:00,2014-08-16 13:00,2014-08-12 13:00,2014-08-16 13:00,2015-05-28 15:00,2015-06-01 15:00,,PT_Normal,,,,,DLWg7oThq0qBAkg81naSKw,EHUbUpWkP0yCAgxPOt5a/Q,,,N,0,0,,,2014-04-13 07:21,2014-04-14 16:04,admin,admin,
3469,143566,6971,40476,7842,0,N,N,N,CP_Phys,TT_Task,DT_FixedDrtn,TK_NotStart,CZA-TK-0520-2910,Inspection,8391,2482,14,10,0,0,0,10,0,0,0,,,,2015-06-01 15:00,2015-06-02 15:00,,2014-08-16 13:00,2014-08-17 13:00,2014-08-16 13:00,2014-08-17 13:00,2014-08-16 13:00,2014-08-17 13:00,2015-06-01 15:00,2015-06-02 15:00,,PT_Normal,,,,,znXLr5IaTk+ArfDkdHs9JQ,1UU8YaEzJEe4216vX1DsEA,,,N,0,0,,,2014-04-13 07:21,2014-04-14 16:04,admin,admin,
3470,143567,6971,40477,7842,0,N,N,N,CP_Phys,TT_Task,DT_FixedDrtn,TK_NotStart,CZA-TK-0520-2310,Laying and Fit-up,8391,2482,0,10,0,31.393311,31.393311,10,20,0,20,,,,2015-01-14 15:00,2015-01-15 15:00,,2014-03-31 13:00,2014-04-01 13:00,2014-03-31 13:00,2014-04-01 13:00,2014-03-31 13:00,2014-04-01 13:00,2015-01-14 15:00,2015-01-15 15:00,,PT_Normal,,,,,RI3goNsLDU+WjK/O3MFkCA,O3IjZXzGpUCZYgEFlnbR7w,,,N,0,0,,,2014-04-13 07:21,2014-04-14 16:04,admin,admin,
3471,143568,6971,40477,7842,0,N,N,N,CP_Phys,TT_Task,DT_FixedDrtn,TK_NotStart,CZA-TK-0520-2320,Welding,8391,2482,0,30,0,39.241639,39.241639,30,60,0,60,,,,2015-01-15 15:00,2015-01-19 15:00,,2014-04-01 13:00,2014-04-05 13:00,2014-04-01 13:00,2014-04-05 13:00,2014-04-01 13:00,2014-04-05 13:00,2015-01-15 15:00,2015-01-19 15:00,,PT_Normal,,,,,Pao/S/uDkU+vErdZhiAVXg,P9+okIPx5kanosFkcYefpg,,,N,0,0,,,2014-04-13 07:21,2014-04-14 16:04,admin,admin,
3472,143569,6971,40477,7842,0,N,N,N,CP_Phys,TT_Task,DT_FixedDrtn,TK_NotStart,CZA-TK-0520-2330,Inspection,8391,2482,0,40,0,7.848328,7.848328,40,0,0,0,,,,2015-01-14 15:00,2015-01-19 15:00,,2014-03-31 13:00,2014-04-05 13:00,2014-03-31 13:00,2014-04-05 13:00,2014-03-31 13:00,2014-04-05 13:00,2015-01-14 15:00,2015-01-19 15:00,,PT_Normal,,,,,vGRkpuTxA0itHFGWKJoyRw,dNZwTPjbUUeD+6O2j1GVXg,,,N,0,0,,,2014-04-13 07:21,2014-04-14 16:04,admin,admin,
3473,143570,6971,40478,7842,0,N,N,N,CP_Phys,TT_Task,DT_FixedDrtn,TK_NotStart,CZA-TK-0520-2340,Erection and Fit-up,8391,2482,0,10,0,90.833321,90.833321,10,20,0,20,,,,2015-01-19 15:00,2015-01-20 15:00,,2014-04-05 13:00,2014-04-06 13:00,2014-04-05 13:00,2014-04-06 13:00,2014-04-05 13:00,2014-04-06 13:00,2015-01-19 15:00,2015-01-20 15:00,,PT_Normal,,,,,EriEiuqjcUKvHg7NUOsU0Q,nJdJuHBBCUGns6GISdw8fA,,,N,0,0,,,2014-04-13 07:21,2014-04-14 16:04,admin,admin,
3474,143571,6971,40478,7842,0,N,N,N,CP_Phys,TT_Task,DT_FixedDrtn,TK_NotStart,CZA-TK-0520-2350,Welding,8391,2482,0,40,0,113.541651,113.541651,40,80,0,80,,,,2015-01-20 15:00,2015-01-25 15:00,,2014-04-06 13:00,2014-04-10 13:00,2014-04-06 13:00,2014-04-10 13:00,2014-04-06 13:00,2014-04-10 13:00,2015-01-20 15:00,2015-01-25 15:00,,PT_Normal,,,,,9EYVX7Nk4UGLvEvwxaGWug,ULWzOHOaNEq7EkB0rvLXFg,,,N,0,0,,,2014-04-13 07:21,2014-04-14 16:04,admin,admin,
3475,143572,6971,40478,7842,0,N,N,N,CP_Phys,TT_Task,DT_FixedDrtn,TK_NotStart,CZA-TK-0520-2360,Inspection,8391,2482,0,50,0,22.70833,22.70833,50,0,0,0,,,,2015-01-19 15:00,2015-01-25 15:00,,2014-04-05 13:00,2014-04-10 13:00,2014-04-05 13:00,2014-04-10 13:00,2014-04-05 13:00,2014-04-10 13:00,2015-01-19 15:00,2015-01-25 15:00,,PT_Normal,,,,,u/I519wKhUOjiJOu3SdeRw,BliE5LbbzEuQKJ7lpNkohw,,,N,0,0,,,2014-04-13 07:21,2014-04-14 16:04,admin,admin,
3476,143573,6971,40479,7842,0,N,N,N,CP_Phys,TT_Task,DT_FixedDrtn,TK_NotStart,CZA-TK-0520-2370,Erection and Fit-up,8391,2482,0,10,0,162.115707,162.115707,10,20,0,20,,,,2015-01-25 15:00,2015-01-26 15:00,,2014-04-10 13:00,2014-04-12 13:00,2014-04-10 13:00,2014-04-12 13:00,2014-04-10 13:00,2014-04-12 13:00,2015-01-25 15:00,2015-01-26 15:00,,PT_Normal,,,,,YyQGNbbCrUq08amGBfkPLw,enAQKU3r90mfWaPlYmy4WA,,,N,0,0,,,2014-04-13 07:21,2014-04-14 16:04,admin,admin,
3477,143574,6971,40479,7842,0,N,N,N,CP_Phys,TT_Task,DT_FixedDrtn,TK_NotStart,CZA-TK-0520-2380,Welding,8391,2482,0,30,0,202.644634,202.644634,30,60,0,60,,,,2015-01-26 15:00,2015-01-29 15:00,,2014-04-12 13:00,2014-04-15 13:00,2014-04-12 13:00,2014-04-15 13:00,2014-04-12 13:00,2014-04-15 13:00,2015-01-26 15:00,2015-01-29 15:00,,PT_Normal,,,,,GkIsdCxeZU62rBDEFEc9uQ,ExEez/69rEqKDMiv7khrkQ,,,N,0,0,,,2014-04-13 07:21,2014-04-14 16:04,admin,admin,
3478,143575,6971,40479,7842,0,N,N,N,CP_Phys,TT_Task,DT_FixedDrtn,TK_NotStart,CZA-TK-0520-2390,Inspection,8391,2482,0,40,0,40.528927,40.528927,40,0,0,0,,,,2015-01-25 15:00,2015-01-29 15:00,,2014-04-10 13:00,2014-04-15 13:00,2014-04-10 13:00,2014-04-15 13:00,2014-04-10 13:00,2014-04-15 13:00,2015-01-25 15:00,2015-01-29 15:00,,PT_Normal,,,,,Vy0aV50DqEq3ni9T1ugjPw,sO39ROrygEavjBEuqmlEcw,,,N,0,0,,,2014-04-13 07:21,2014-04-14 16:04,admin,admin,
3479,143576,6971,40689,7842,0,N,N,N,CP_Phys,TT_Task,DT_FixedDrtn,TK_NotStart,CZA-TK-0520-2400,Erection and Fit-up,8391,2482,0,10,0,18.71172,18.71172,10,0,0,0,,,,2015-01-29 15:00,2015-01-31 15:00,,2014-04-15 13:00,2014-04-16 13:00,2014-04-15 13:00,2014-04-16 13:00,2014-04-15 13:00,2014-04-16 13:00,2015-01-29 15:00,2015-01-31 15:00,,PT_Normal,,,,,+kudykz0DESfVlhLxV7C7g,V544l7A3Pk6zp+ayPZs+dw,,,N,0,0,,,2014-04-13 07:21,2014-04-14 16:04,admin,admin,
3480,143577,6971,40689,7842,0,N,N,N,CP_Phys,TT_Task,DT_FixedDrtn,TK_NotStart,CZA-TK-0520-2410,Welding,8391,2482,0,30,0,23.38965,23.38965,30,60,0,60,,,,2015-01-31 15:00,2015-02-03 15:00,,2014-04-16 13:00,2014-04-20 13:00,2014-04-16 13:00,2014-04-20 13:00,2014-04-16 13:00,2014-04-20 13:00,2015-01-31 15:00,2015-02-03 15:00,,PT_Normal,,,,,BfDjPfBdbUiuwnE0giOBrQ,KTYSFVFjq0e4wz0Mdtt/iA,,,N,0,0,,,2014-04-13 07:21,2014-04-14 16:04,admin,admin,
3481,143578,6971,40689,7842,0,N,N,N,CP_Phys,TT_Task,DT_FixedDrtn,TK_NotStart,CZA-TK-0520-2420,Inspection,8391,2482,0,40,0,4.67793,4.67793,40,0,0,0,,,,2015-01-29 15:00,2015-02-03 15:00,,2014-04-15 13:00,2014-04-20 13:00,2014-04-15 13:00,2014-04-20 13:00,2014-04-15 13:00,2014-04-20 13:00,2015-01-29 15:00,2015-02-03 15:00,,PT_Normal,,,,,EKuBp0MZ5k+5lHZea9GOXA,XyDl6T5WHU2nvOrc1VuQHQ,,,N,0,0,,,2014-04-13 07:21,2014-04-14 16:04,admin,admin,
3482,143579,6971,40690,7842,0,N,N,N,CP_Phys,TT_Task,DT_FixedDrtn,TK_NotStart,CZA-TK-0520-2430,"Cutting, Installation and Fit-up",8391,2482,0,20,0,0,0,20,40,0,40,,,,2015-02-03 15:00,2015-02-05 15:00,,2014-04-20 13:00,2014-04-22 13:00,2014-04-20 13:00,2014-04-22 13:00,2014-04-20 13:00,2014-04-22 13:00,2015-02-03 15:00,2015-02-05 15:00,,PT_Normal,,,,,b+VL698/I0mC2/9u03/ccA,9VihXiU/VEqmBFTYs9XkMA,,,N,0,0,,,2014-04-13 07:21,2014-04-14 16:04,admin,admin,
3483,143580,6971,40690,7842,0,N,N,N,CP_Phys,TT_Task,DT_FixedDrtn,TK_NotStart,CZA-TK-0520-2440,Welding,8391,2482,0,30,0,0,0,30,60,0,60,,,,2015-02-05 15:00,2015-02-09 15:00,,2014-04-22 13:00,2014-04-26 13:00,2014-04-22 13:00,2014-04-26 13:00,2014-04-22 13:00,2014-04-26 13:00,2015-02-05 15:00,2015-02-09 15:00,,PT_Normal,,,,,tQPh6hutY0OE/phAPc5Fzg,2CRy1+frykiS2DLkJqJJtQ,,,N,0,0,,,2014-04-13 07:21,2014-04-14 16:04,admin,admin,
3484,143581,6971,40690,7842,0,N,N,N,CP_Phys,TT_Task,DT_FixedDrtn,TK_NotStart,CZA-TK-0520-2450,Inspection,8391,2482,0,50,0,0,0,50,0,0,0,,,,2015-02-03 15:00,2015-02-09 15:00,,2014-04-20 13:00,2014-04-26 13:00,2014-04-20 13:00,2014-04-26 13:00,2014-04-20 13:00,2014-04-26 13:00,2015-02-03 15:00,2015-02-09 15:00,,PT_Normal,,,,,+F7CgFXHo0ieMn9X3G+uaA,DUGmodsm9E6kpjyH7Nc12w,,,N,0,0,,,2014-04-13 07:21,2014-04-14 16:04,admin,admin,
3485,143582,6971,40691,7842,0,N,N,N,CP_Phys,TT_Task,DT_FixedDrtn,TK_NotStart,CZA-TK-0520-2460,Laying & Fit-up,8391,2482,0,20,0,209.98743,209.98743,20,40,0,40,,,,2015-02-09 15:00,2015-02-11 15:00,,2014-04-26 13:00,2014-04-28 13:00,2014-04-26 13:00,2014-04-28 13:00,2014-04-26 13:00,2014-04-28 13:00,2015-02-09 15:00,2015-02-11 15:00,,PT_Normal,,,,,lpqKUMik40GwEevh3ZdSQw,dgw9ljAHdEGA+UPpqka23Q,,,N,0,0,,,2014-04-13 07:21,2014-04-14 16:04,admin,admin,
3486,143583,6971,40691,7842,0,N,N,N,CP_Phys,TT_Task,DT_FixedDrtn,TK_NotStart,CZA-TK-0520-2470,Welding,8391,2482,0,70,0,262.484288,262.484288,70,140,0,140,,,,2015-02-11 15:00,2015-02-19 15:00,,2014-04-28 13:00,2014-05-06 13:00,2014-04-28 13:00,2014-05-06 13:00,2014-04-28 13:00,2014-05-06 13:00,2015-02-11 15:00,2015-02-19 15:00,,PT_Normal,,,,,AnfxX5DaUkmixtXn3gZY+w,grlhbCWoNESGg5ha75R9gA,,,N,0,0,,,2014-04-13 07:21,2014-04-14 16:04,admin,admin,
3487,143584,6971,40691,7842,0,N,N,N,CP_Phys,TT_Task,DT_FixedDrtn,TK_NotStart,CZA-TK-0520-2480,Inspection,8391,2482,0,90,0,52.496858,52.496858,90,0,0,0,,,,2015-02-09 15:00,2015-02-19 15:00,,2014-04-26 13:00,2014-05-06 13:00,2014-04-26 13:00,2014-05-06 13:00,2014-04-26 13:00,2014-05-06 13:00,2015-02-09 15:00,2015-02-19 15:00,,PT_Normal,,,,,UdPDdzeynE2f6p6nGxBhJw,N6969lHVYEezKecx56Veqg,,,N,0,0,,,2014-04-13 07:21,2014-04-14 16:04,admin,admin,
3488,143585,6971,40692,7842,0,N,N,N,CP_Phys,TT_Task,DT_FixedDrtn,TK_NotStart,CZA-TK-0520-2490,"Cutting of All Holes, Laying & Fit-up",8391,2482,0,30,0,21.407187,21.407187,30,60,0,60,,,,2015-02-19 15:00,2015-02-23 15:00,,2014-05-06 13:00,2014-05-10 13:00,2014-05-06 13:00,2014-05-10 13:00,2014-05-06 13:00,2014-05-10 13:00,2015-02-19 15:00,2015-02-23 15:00,,PT_Normal,,,,,e68e5GPgwEaoyJihyaDQ+g,gihZOP2VdkqwAFsohCFDug,,,N,0,0,,,2014-04-13 07:21,2014-04-14 16:04,admin,admin,
3489,143586,6971,40692,7842,0,N,N,N,CP_Phys,TT_Task,DT_FixedDrtn,TK_NotStart,CZA-TK-0520-2500,Welding of Sleeves and Plates,8391,2482,0,100,0,26.758984,26.758984,100,200,0,200,,,,2015-02-23 15:00,2015-03-07 15:00,,2014-05-10 13:00,2014-05-21 13:00,2014-05-10 13:00,2014-05-21 13:00,2014-05-10 13:00,2014-05-21 13:00,2015-02-23 15:00,2015-03-07 15:00,,PT_Normal,,,,,UTwxwsDkh0CESPpehdlh3Q,wVtceWXKZkmgQxjng/1irg,,,N,0,0,,,2014-04-13 07:21,2014-04-14 16:04,admin,admin,
3490,143587,6971,40692,7842,0,N,N,N,CP_Phys,TT_Task,DT_FixedDrtn,TK_NotStart,CZA-TK-0520-2550,Installation of Leg Support,8391,2482,0,10,0,2.675898,2.675898,10,20,0,20,,,,2015-03-07 15:00,2015-03-08 15:00,,2014-05-21 13:00,2014-05-22 13:00,2014-05-21 13:00,2014-05-22 13:00,2014-05-21 13:00,2014-05-22 13:00,2015-03-07 15:00,2015-03-08 15:00,,PT_Normal,,,,,+CvtkgcLcUmv9Rpd6vqcgA,Gj/l9U2WVU+dk+Xv0vhphA,,,N,0,0,,,2014-04-13 07:21,2014-04-14 16:04,admin,admin,
3491,143588,6971,40692,7842,0,N,N,N,CP_Phys,TT_Task,DT_FixedDrtn,TK_NotStart,CZA-TK-0520-2560,Inspection,8391,2482,0,140,0,2.675898,2.675898,140,0,0,0,,,,2015-02-19 15:00,2015-03-08 15:00,,2014-05-06 13:00,2014-05-22 13:00,2014-05-06 13:00,2014-05-22 13:00,2014-05-06 13:00,2014-05-22 13:00,2015-02-19 15:00,2015-03-08 15:00,,PT_Normal,,,,,AhuE1LO1l0KC2doree/4oA,yaZBVOCe7Umg1/hYD9KtmA,,,N,0,0,,,2014-04-13 07:21,2014-04-14 16:04,admin,admin,
3492,143589,6971,40122,7842,0,N,N,N,CP_Phys,TT_Task,DT_FixedDrtn,TK_NotStart,CZA-TK-0520-2930,"Blasting and Painting of Bottom, Shell and Roof (Inside and Outside)",8391,2498,0,70,0,1050.98781,1050.98781,70,70,0,70,,,,2015-06-11 15:00,2015-06-20 15:00,,2014-08-25 07:00,2014-09-01 17:00,2014-08-25 07:00,2014-09-01 17:00,2014-08-25 07:00,2014-09-01 17:00,2015-06-11 15:00,2015-06-20 15:00,,PT_Normal,,,,,EFfC8d0G80iv+332fnfVsw,iHmtl8IcV0mwO9CJrzwCAQ,,,N,0,0,,,2014-04-13 07:21,2014-04-14 16:04,admin,admin,
3493,143590,6971,39958,7842,0,N,N,N,CP_Phys,TT_Mile,DT_FixedDrtn,TK_NotStart,CZA-TK-0520-2300,Foundation Takeover from Client,,0,0,0,0,0,0,0,0,0,0,2014-03-31 13:00,,,2014-03-31 13:00,2014-03-31 13:00,,2014-03-31 13:00,2014-03-31 13:00,2014-03-31 13:00,2014-03-31 13:00,2014-03-31 13:00,2014-03-31 13:00,2014-03-31 13:00,2014-03-31 13:00,CS_MSO,PT_Normal,,,,,UiLLIqs2fkSnbSpgenwHGQ,1EAo/XzVLU2xolxQfAvxHw,,,N,0,0,,,2014-04-13 07:21,2014-04-13 07:21,admin,admin,
3494,143591,6971,39960,7842,0,N,N,N,CP_Phys,TT_Mile,DT_FixedDrtn,TK_NotStart,CZA-TK-0535-2150,Foundation Takeover From Client,,0,0,0,0,0,0,0,0,0,0,2014-04-28 00:00,,,2014-04-27 17:00,2014-04-27 17:00,,2014-04-28 07:00,2014-04-28 07:00,2014-04-28 07:00,2014-04-28 07:00,2014-04-28 07:00,2014-04-28 07:00,2014-04-27 17:00,2014-04-27 17:00,CS_MSO,PT_Normal,,,,,YJ1TaCpga0KT2eEB2bejtg,nXiK6wcLpESg3GWn+navLA,,,N,0,0,,,2014-04-13 07:21,2014-04-13 07:42,admin,admin,
3495,143592,6971,39961,7842,0,N,N,N,CP_Phys,TT_Task,DT_FixedDrtn,TK_NotStart,CZA-TK-0535-2850,"Blasting and Painting (Shell, Roof & Bottom)-Outside & Inside",8393,1814.666667,0,200,0,4395.039933,4395.039933,200,400,0,400,,,,2015-05-27 15:00,2015-06-20 15:00,,2014-10-28 10:20,2014-11-20 10:20,2014-10-28 10:20,2014-11-20 10:20,2014-10-28 10:20,2014-11-20 10:20,2015-05-27 15:00,2015-06-20 15:00,,PT_Normal,,,,,0WHKcI7ue0yeQkHLcZ7WDQ,Pr71bBADzEupd7iGfAtO5g,,,N,0,0,,,2014-04-13 07:21,2014-04-15 07:43,admin,admin,
3496,143593,6971,40071,7842,0,N,N,N,CP_Phys,TT_Task,DT_FixedDrtn,TK_NotStart,CZA-TK-0535-2840,"Filling, Holding and Draining of Water",8393,1814.666667,0,250,0,7325.066554,7325.066554,250,0,0,0,,,,2015-04-28 15:00,2015-05-27 15:00,,2014-09-29 10:20,2014-10-28 10:20,2014-09-29 10:20,2014-10-28 10:20,2014-09-29 10:20,2014-10-28 10:20,2015-04-28 15:00,2015-05-27 15:00,,PT_Normal,,,,,cMEWb5IJIkyTcfmUo3eaMg,olpmNdjYfE+bjWhrjxL3gQ,,,N,0,0,,,2014-04-13 07:21,2014-04-15 07:43,admin,admin,
3497,143594,6971,40072,7842,0,N,N,N,CP_Phys,TT_Task,DT_FixedDrtn,TK_NotStart,CZA-TK-0535-1940,Cutting of Annular Plates,8498,2922,0,40,0,323.3556,323.3556,40,0,0,0,,,,2015-01-31 15:00,2015-02-04 15:00,,2014-02-24 13:00,2014-03-01 13:00,2014-02-24 13:00,2014-03-01 13:00,2014-02-24 13:00,2014-03-01 13:00,2015-01-31 15:00,2015-02-04 15:00,,PT_Normal,,,,,WrzDT8vIoUiF9yoBpRItdw,shmBK2bcO0CJYQAdzAkvcA,,,N,0,0,,,2014-04-13 07:21,2014-04-14 17:03,admin,admin,
3498,143595,6971,40072,7842,0,N,N,N,CP_Phys,TT_Task,DT_FixedDrtn,TK_NotStart,CZA-TK-0535-1950,Cutting of Bottom Plates & Compression Ring,8498,3184.666667,0,40,0,1065.1704,1065.1704,40,0,0,0,,,,2015-03-03 07:40,2015-03-08 07:40,,2014-02-24 13:00,2014-03-01 13:00,2014-02-24 13:00,2014-03-01 13:00,2014-02-24 13:00,2014-03-01 13:00,2015-03-03 07:40,2015-03-08 07:40,,PT_Normal,,,,,S+ib+IlTOEO+gBmD4s1Xxw,wylrnourfUCX+JOJLio1CA,,,N,0,0,,,2014-04-13 07:21,2014-04-15 07:43,admin,admin,
3499,143596,6971,40072,7842,0,N,N,N,CP_Phys,TT_Task,DT_FixedDrtn,TK_NotStart,CZA-TK-0535-1960,"Cutting, Bevelling & Rolling  Shell No.8",8498,3184.666667,0,20,0,120.3696,120.3696,20,0,0,0,,,,2015-03-04 13:40,2015-03-07 13:40,,2014-02-26 09:00,2014-03-01 09:00,2014-02-26 09:00,2014-03-01 09:00,2014-02-26 09:00,2014-03-01 09:00,2015-03-04 13:40,2015-03-07 13:40,,PT_Normal,,,,,dse8EyTHLkaiIrL0em/JhQ,0pZo3OhGa0CCtHtmiHfsKA,,,N,0,0,,,2014-04-13 07:21,2014-04-15 07:43,admin,admin,
3500,143597,6971,40072,7842,0,N,N,N,CP_Phys,TT_Task,DT_FixedDrtn,TK_NotStart,CZA-TK-0535-1970,"Cutting, Bevelling and Rolling Shell No.9",8498,3184.666667,0,20,0,339.4578,339.4578,20,0,0,0,,,,2015-03-04 13:40,2015-03-07 13:40,,2014-02-26 09:00,2014-03-01 09:00,2014-02-26 09:00,2014-03-01 09:00,2014-02-26 09:00,2014-03-01 09:00,2015-03-04 13:40,2015-03-07 13:40,,PT_Normal,,,,,MVqvdnX4Mk+jF1j5smtcyg,DdUSoOxJQkyM9O2UN6lRRA,,,N,0,0,,,2014-04-13 07:21,2014-04-15 07:43,admin,admin,
3501,143598,6971,40072,7842,0,N,N,N,CP_Phys,TT_Task,DT_FixedDrtn,TK_NotStart,CZA-TK-0535-1980,Cutting of Floating Deck Plate & Stairway (Upper Part),8498,3184.666667,0,70,0,148.4388,148.4388,70,0,0,0,,,,2015-03-07 13:40,2015-03-15 13:40,,2014-03-01 09:00,2014-03-09 09:00,2014-03-01 09:00,2014-03-09 09:00,2014-03-01 09:00,2014-03-09 09:00,2015-03-07 13:40,2015-03-15 13:40,,PT_Normal,,,,,XAgObbfpHka0Q1BUkTYcSA,6EVMlw3vPUO/BxAKV+SzOA,,,N,0,0,,,2014-04-13 07:21,2014-04-15 07:43,admin,admin,
3502,143599,6971,40072,7842,0,N,N,N,CP_Phys,TT_Task,DT_FixedDrtn,TK_NotStart,CZA-TK-0535-1990,Cutting of Pontoon,8498,3184.666667,0,100,0,656.979,656.979,100,0,0,0,,,,2015-03-09 09:40,2015-03-21 09:40,,2014-03-02 15:00,2014-03-13 15:00,2014-03-02 15:00,2014-03-13 15:00,2014-03-02 15:00,2014-03-13 15:00,2015-03-09 09:40,2015-03-21 09:40,,PT_Normal,,,,,+HCLvEumbEqpxWJA/Q9+1A,rGalScDjsEC0bv+qOZGARg,,,N,0,0,,,2014-04-13 07:21,2014-04-15 07:43,admin,admin,
3503,143600,6971,40072,7842,0,N,N,N,CP_Phys,TT_Task,DT_FixedDrtn,TK_NotStart,CZA-TK-0535-2000,"Cutting, Fit-up, Roof legs and Manholes",8498,3184.666667,0,70,0,0,0,70,0,0,0,,,,2015-03-10 15:40,2015-03-18 15:40,,2014-03-04 11:00,2014-03-12 11:00,2014-03-04 11:00,2014-03-12 11:00,2014-03-04 11:00,2014-03-12 11:00,2015-03-10 15:40,2015-03-18 15:40,,PT_Normal,,,,,Gf/KkJwQAE6ivA+r1Xcn0A,AeiFqYblykylfRoajAy7xg,,,N,0,0,,,2014-04-13 07:21,2014-04-15 07:43,admin,admin,
3504,143601,6971,40072,7842,0,N,N,N,CP_Phys,TT_Task,DT_FixedDrtn,TK_NotStart,CZA-TK-0535-2010,"Cutting, Fit-up, and Welding of Roof Structure",8498,3184.666667,0,70,0,1346.295,1346.295,70,0,0,0,,,,2015-03-18 15:40,2015-03-26 15:40,,2014-03-12 11:00,2014-03-20 11:00,2014-03-12 11:00,2014-03-20 11:00,2014-03-12 11:00,2014-03-20 11:00,2015-03-18 15:40,2015-03-26 15:40,,PT_Normal,,,,,Yu0X7WlU60Wqx8ZPyQxgOA,CxG6kipTm0GqfMkPWre2Pg,,,N,0,0,,,2014-04-13 07:21,2014-04-15 07:43,admin,admin,
3505,143602,6971,40072,7842,0,N,N,N,CP_Phys,TT_Task,DT_FixedDrtn,TK_NotStart,CZA-TK-0535-2020,Cutting of Roof Plates,8498,3184.666667,0,20,0,0,0,20,0,0,0,,,,2015-03-26 15:40,2015-03-29 15:40,,2014-03-20 11:00,2014-03-23 11:00,2014-03-20 11:00,2014-03-23 11:00,2014-03-20 11:00,2014-03-23 11:00,2015-03-26 15:40,2015-03-29 15:40,,PT_Normal,,,,,uYZbpFvxekOOb1+RVNVYpQ,u4nwUbPCwE+3UWcc4ws6yA,,,N,0,0,,,2014-04-13 07:21,2014-04-15 07:43,admin,admin,
3506,143603,6971,40072,7842,0,N,N,N,CP_Phys,TT_Task,DT_FixedDrtn,TK_NotStart,CZA-TK-0535-2030,"Cutting, Fit-up, & Welding of Roof Nozzles, Manholes & other Appurtanances",8498,3184.666667,0,70,0,0,0,70,0,0,0,,,,2015-03-29 11:40,2015-04-06 11:40,,2014-03-23 07:00,2014-03-30 17:00,2014-03-23 07:00,2014-03-30 17:00,2014-03-23 07:00,2014-03-30 17:00,2015-03-29 11:40,2015-04-06 11:40,,PT_Normal,,,,,HhU554G8tECiSKTb0jjKsg,flUFSVHY4Eq1Jwf/CwDRQg,,,N,0,0,,,2014-04-13 07:21,2014-04-15 07:43,admin,admin,
3507,143604,6971,40072,7842,0,N,N,N,CP_Phys,TT_Task,DT_FixedDrtn,TK_NotStart,CZA-TK-0535-2040,"Cutting, Fit-up & Welding of Roof Platform, Gratings and Handrails",8498,3184.666667,0,150,0,0,0,150,0,0,0,,,,2015-03-31 15:40,2015-04-18 15:40,,2014-03-25 11:00,2014-04-12 11:00,2014-03-25 11:00,2014-04-12 11:00,2014-03-25 11:00,2014-04-12 11:00,2015-03-31 15:40,2015-04-18 15:40,,PT_Normal,,,,,wb44/N6tHkO9R7RgjYtR5Q,jvgl9ZQveEqxPuwfX0b0cg,,,N,0,0,,,2014-04-13 07:21,2014-04-15 07:43,admin,admin,
3508,143605,6971,40072,7842,0,N,N,N,CP_Phys,TT_Task,DT_FixedDrtn,TK_NotStart,CZA-TK-0535-2050,"Cutting, Bevelling and Rolling Shell No.7",8498,3184.666667,0,20,0,30.792,30.792,20,0,0,0,,,,2015-04-07 11:40,2015-04-09 11:40,,2014-04-01 07:00,2014-04-02 17:00,2014-04-01 07:00,2014-04-02 17:00,2014-04-01 07:00,2014-04-02 17:00,2015-04-07 11:40,2015-04-09 11:40,,PT_Normal,,,,,c7oN/Cpxz0OJi/oU3lN1fg,FcWdcVdUs0mUjqNd+3NBSQ,,,N,0,0,,,2014-04-13 07:21,2014-04-15 07:43,admin,admin,
3509,143606,6971,40072,7842,0,N,N,N,CP_Phys,TT_Task,DT_FixedDrtn,TK_NotStart,CZA-TK-0535-2060,"Cutting, Bevelling and Rolling Shell No.6",8498,3184.666667,0,20,0,372.0132,372.0132,20,0,0,0,,,,2015-04-07 11:40,2015-04-09 11:40,,2014-04-01 07:00,2014-04-02 17:00,2014-04-01 07:00,2014-04-02 17:00,2014-04-01 07:00,2014-04-02 17:00,2015-04-07 11:40,2015-04-09 11:40,,PT_Normal,,,,,CYMhEV2/jESkzRj3UwhoAQ,Y661+SUAeUWfKg03al/aEQ,,,N,0,0,,,2014-04-13 07:21,2014-04-15 07:43,admin,admin,
3510,143607,6971,40072,7842,0,N,N,N,CP_Phys,TT_Task,DT_FixedDrtn,TK_NotStart,CZA-TK-0535-2070,"Cutting, Bevelling and Rolling Shell No.5",8498,3184.666667,0,20,0,433.0047,433.0047,20,0,0,0,,,,2015-04-09 11:40,2015-04-12 11:40,,2014-04-03 07:00,2014-04-05 17:00,2014-04-03 07:00,2014-04-05 17:00,2014-04-03 07:00,2014-04-05 17:00,2015-04-09 11:40,2015-04-12 11:40,,PT_Normal,,,,,RRGkEoEPWk+558mk3KBJUg,EPV0ZMgwe0+6sKs3a4dH2g,,,N,0,0,,,2014-04-13 07:21,2014-04-15 07:43,admin,admin,
3511,143608,6971,40072,7842,0,N,N,N,CP_Phys,TT_Task,DT_FixedDrtn,TK_NotStart,CZA-TK-0535-2080,"Cutting, Bevelling and Rolling Shell No.4",8498,3184.666667,0,20,0,556.7514,556.7514,20,0,0,0,,,,2015-04-09 11:40,2015-04-12 11:40,,2014-04-03 07:00,2014-04-05 17:00,2014-04-03 07:00,2014-04-05 17:00,2014-04-03 07:00,2014-04-05 17:00,2015-04-09 11:40,2015-04-12 11:40,,PT_Normal,,,,,N3IkRwesuUylmb2e8Sk4vQ,ONe56sdZRkyF+UuexoAouQ,,,N,0,0,,,2014-04-13 07:21,2014-04-15 07:43,admin,admin,
3512,143609,6971,40072,7842,0,N,N,N,CP_Phys,TT_Task,DT_FixedDrtn,TK_NotStart,CZA-TK-0535-2090,"Cutting, Bevelling and Rolling Shell No.3",8498,3184.666667,0,20,0,680.5086,680.5086,20,0,0,0,,,,2015-04-12 11:40,2015-04-14 11:40,,2014-04-06 07:00,2014-04-07 17:00,2014-04-06 07:00,2014-04-07 17:00,2014-04-06 07:00,2014-04-07 17:00,2015-04-12 11:40,2015-04-14 11:40,,PT_Normal,,,,,tpIrH6ykxUm0+O3xZsfNgQ,yrD70IHwmkScZU4ATt5j+Q,,,N,0,0,,,2014-04-13 07:21,2014-04-15 07:43,admin,admin,
3513,143610,6971,40072,7842,0,N,N,N,CP_Phys,TT_Task,DT_FixedDrtn,TK_NotStart,CZA-TK-0535-2100,"Cutting, Bevelling and Rolling Shell No.2",8498,3184.666667,0,20,0,804.2823,804.2823,20,0,0,0,,,,2015-04-12 11:40,2015-04-14 11:40,,2014-04-06 07:00,2014-04-07 17:00,2014-04-06 07:00,2014-04-07 17:00,2014-04-06 07:00,2014-04-07 17:00,2015-04-12 11:40,2015-04-14 11:40,,PT_Normal,,,,,uDBP4RxgkUmW2/S30xLtfg,YkXm6V0rskqzR6hl+vHqNg,,,N,0,0,,,2014-04-13 07:21,2014-04-15 07:43,admin,admin,
3514,143611,6971,40072,7842,0,N,N,N,CP_Phys,TT_Task,DT_FixedDrtn,TK_NotStart,CZA-TK-0535-2110,"Cutting, Bevelling and Rolling Shell No.1",8498,3184.666667,0,20,0,928.0779,928.0779,20,0,0,0,,,,2015-04-12 11:40,2015-04-14 11:40,,2014-04-06 07:00,2014-04-07 17:00,2014-04-06 07:00,2014-04-07 17:00,2014-04-06 07:00,2014-04-07 17:00,2015-04-12 11:40,2015-04-14 11:40,,PT_Normal,,,,,HOwVAqxnaUWSPPF4kJslmQ,DEZEo/Tx60muxYMtJEmeKA,,,N,0,0,,,2014-04-13 07:21,2014-04-15 07:43,admin,admin,
3515,143612,6971,40072,7842,0,N,N,N,CP_Phys,TT_Task,DT_FixedDrtn,TK_NotStart,CZA-TK-0535-2130,"Cutting, Fit-up & Welding of Shell Nozzles, Manholes and Other Appurtanances",8498,3184.666667,0,80,0,0,0,80,0,0,0,,,,2015-04-12 11:40,2015-04-21 11:40,,2014-04-06 07:00,2014-04-14 17:00,2014-04-06 07:00,2014-04-14 17:00,2014-04-06 07:00,2014-04-14 17:00,2015-04-12 11:40,2015-04-21 11:40,,PT_Normal,,,,,FT5Y5ZmG4EeMESQa2PdSrg,jT40r+Iq1EiwuUVVKJ6s4g,,,N,0,0,,,2014-04-13 07:21,2014-04-15 07:43,admin,admin,
3516,143613,6971,40072,7842,0,N,N,N,CP_Phys,TT_Task,DT_FixedDrtn,TK_NotStart,CZA-TK-0535-2140,"Cutting, Fit-up and Welding of Stairway Platform, Gratings and Handrails (Lower Part)",8498,3184.666667,1370,60,0,0,0,60,0,0,0,,,,2015-04-12 11:40,2015-04-19 11:40,,2014-04-06 07:00,2014-04-12 17:00,2014-04-06 07:00,2014-04-12 17:00,2014-04-06 07:00,2014-04-12 17:00,2015-04-12 11:40,2015-04-19 11:40,,PT_Normal,,,,,Kjt/YUJXi0yXoxaU5SiRUA,73tPqtSsGEKWB4VzYnlWqg,,,N,0,0,,,2014-04-13 07:21,2014-04-15 07:43,admin,admin,
3517,143614,6971,40601,7842,0,N,N,N,CP_Phys,TT_Task,DT_FixedDrtn,TK_NotStart,CZA-TK-0535-2410,Welding,8393,1814.666667,0,70,0,736.717502,736.717502,70,210,0,210,,,,2015-01-25 11:40,2015-02-02 11:40,,2014-06-28 07:00,2014-07-05 17:00,2014-06-28 07:00,2014-07-05 17:00,2014-06-28 07:00,2014-07-05 17:00,2015-01-25 11:40,2015-02-02 11:40,,PT_Normal,,,,,uOfvs4ASsk+2u6iJYv5Pnw,DRzmsO97G0GNTI8U1d54FQ,,,N,0,0,,,2014-04-13 07:21,2014-04-15 07:43,admin,admin,
3518,143615,6971,40601,7842,0,N,N,N,CP_Phys,TT_Task,DT_FixedDrtn,TK_NotStart,CZA-TK-0535-2420,Inspection,8393,1814.666667,0,100,0,147.3435,147.3435,100,0,0,0,,,,2015-01-21 11:40,2015-02-02 11:40,,2014-06-24 07:00,2014-07-05 17:00,2014-06-24 07:00,2014-07-05 17:00,2014-06-24 07:00,2014-07-05 17:00,2015-01-21 11:40,2015-02-02 11:40,,PT_Normal,,,,,XI5/Bd+aI0mtLfkJOpKYbQ,5JqA82RGe0OOKxztseQtSA,,,N,0,0,,,2014-04-13 07:21,2014-04-15 07:43,admin,admin,
3519,143616,6971,40601,7842,0,N,N,N,CP_Phys,TT_Task,DT_FixedDrtn,TK_NotStart,CZA-TK-0535-2400,Erection and Fit-up,8393,1814.666667,0,30,0,589.374001,589.374001,30,150,0,150,,,,2015-01-21 11:40,2015-01-25 11:40,,2014-06-24 07:00,2014-06-26 17:00,2014-06-24 07:00,2014-06-26 17:00,2014-06-24 07:00,2014-06-26 17:00,2015-01-21 11:40,2015-01-25 11:40,,PT_Normal,,,,,iKcV2Zwdu0ShF1+vV98Hmg,i7yYJ1O9ZUeyQECvmjxD/w,,,N,0,0,,,2014-04-13 07:21,2014-04-15 07:43,admin,admin,
3520,143617,6971,40493,7842,0,N,N,N,CP_Phys,TT_Task,DT_FixedDrtn,TK_NotStart,CZA-TK-0535-2460,Laying and Fit-up,8393,1814.666667,0,20,0,0,0,20,100,0,100,,,,2015-02-11 11:40,2015-02-14 11:40,,2014-07-15 07:00,2014-07-16 17:00,2014-07-15 07:00,2014-07-16 17:00,2014-07-15 07:00,2014-07-16 17:00,2015-02-11 11:40,2015-02-14 11:40,,PT_Normal,,,,,kMkFN1Gx6E2VHnkSO8b0CQ,bTRtsYMoDE2zidtbFibc7g,,,N,0,0,,,2014-04-13 07:21,2014-04-15 07:43,admin,admin,
3521,143618,6971,40493,7842,0,N,N,N,CP_Phys,TT_Task,DT_FixedDrtn,TK_NotStart,CZA-TK-0535-2470,Welding,8393,1814.666667,0,50,0,0,0,50,150,0,150,,,,2015-02-14 11:40,2015-02-19 11:40,,2014-07-17 07:00,2014-07-22 17:00,2014-07-17 07:00,2014-07-22 17:00,2014-07-17 07:00,2014-07-22 17:00,2015-02-14 11:40,2015-02-19 11:40,,PT_Normal,,,,,3r1JwFd9vkS6TM7EXO8rug,p0MqOlx1rkOIpB2sSUGTcw,,,N,0,0,,,2014-04-13 07:21,2014-04-15 07:43,admin,admin,
3522,143619,6971,40493,7842,0,N,N,N,CP_Phys,TT_Task,DT_FixedDrtn,TK_NotStart,CZA-TK-0535-2480,Inspection,8393,1814.666667,0,70,0,0,0,70,0,0,0,,,,2015-02-11 11:40,2015-02-19 11:40,,2014-07-15 07:00,2014-07-22 17:00,2014-07-15 07:00,2014-07-22 17:00,2014-07-15 07:00,2014-07-22 17:00,2015-02-11 11:40,2015-02-19 11:40,,PT_Normal,,,,,W11Wknvg9Eud8Z9sTJ7X1w,/u9WzLtzQUihbU289F4Zgg,,,N,0,0,,,2014-04-13 07:21,2014-04-15 07:43,admin,admin,
3523,143620,6971,40494,7842,0,N,N,N,CP_Phys,TT_Task,DT_FixedDrtn,TK_NotStart,CZA-TK-0535-2490,"Cutting,lnstallation and Fit-up",8393,1814.666667,0,30,0,0,0,30,150,0,150,,,,2015-02-19 11:40,2015-02-23 11:40,,2014-07-23 07:00,2014-07-26 17:00,2014-07-23 07:00,2014-07-26 17:00,2014-07-23 07:00,2014-07-26 17:00,2015-02-19 11:40,2015-02-23 11:40,,PT_Normal,,,,,4yacxS1KMEyzsF7x7Gq4OA,EeBYkOWOq0euTRV1GrG6AA,,,N,0,0,,,2014-04-13 07:21,2014-04-15 07:43,admin,admin,
3524,143621,6971,40494,7842,0,N,N,N,CP_Phys,TT_Task,DT_FixedDrtn,TK_NotStart,CZA-TK-0535-2500,Welding,8393,1814.666667,0,50,0,0,0,50,0,0,0,,,,2015-02-23 11:40,2015-03-01 11:40,,2014-07-27 07:00,2014-07-31 17:00,2014-07-27 07:00,2014-07-31 17:00,2014-07-27 07:00,2014-07-31 17:00,2015-02-23 11:40,2015-03-01 11:40,,PT_Normal,,,,,y8rWdgSk50O4ZbDy8zn09Q,rhG4/9VuQkWbhpWnmUwxGQ,,,N,0,0,,,2014-04-13 07:21,2014-04-15 07:43,admin,admin,
3525,143622,6971,40494,7842,0,N,N,N,CP_Phys,TT_Task,DT_FixedDrtn,TK_NotStart,CZA-TK-0535-2510,Inspection,8393,1814.666667,0,80,0,0,0,80,0,0,0,,,,2015-02-19 11:40,2015-03-01 11:40,,2014-07-23 07:00,2014-07-31 17:00,2014-07-23 07:00,2014-07-31 17:00,2014-07-23 07:00,2014-07-31 17:00,2015-02-19 11:40,2015-03-01 11:40,,PT_Normal,,,,,xYnh1wY1cE6VVGrzjt3aTw,l6O8uCOSSESUMDTPo3vxSQ,,,N,0,0,,,2014-04-13 07:21,2014-04-15 07:43,admin,admin,
3526,143623,6971,40495,7842,0,N,N,N,CP_Phys,TT_Task,DT_FixedDrtn,TK_NotStart,CZA-TK-0535-2520,Erection and Fit-up,8393,1814.666667,0,30,0,0,0,30,0,0,0,,,,2015-02-19 11:40,2015-02-23 11:40,,2014-07-23 07:00,2014-07-26 17:00,2014-07-23 07:00,2014-07-26 17:00,2014-07-23 07:00,2014-07-26 17:00,2015-02-19 11:40,2015-02-23 11:40,,PT_Normal,,,,,HWkWiXAqakyuw1ARUex9Fg,PxAR2XP9q0+3p3vRGKPTeQ,,,N,0,0,,,2014-04-13 07:21,2014-04-15 07:43,admin,admin,
3527,143624,6971,40495,7842,0,N,N,N,CP_Phys,TT_Task,DT_FixedDrtn,TK_NotStart,CZA-TK-0535-2530,Welding,8393,1814.666667,0,50,0,0,0,50,150,0,150,,,,2015-02-23 11:40,2015-03-01 11:40,,2014-07-27 07:00,2014-07-31 17:00,2014-07-27 07:00,2014-07-31 17:00,2014-07-27 07:00,2014-07-31 17:00,2015-02-23 11:40,2015-03-01 11:40,,PT_Normal,,,,,hRQRfROI/keJ2TeJibSniA,IcIItjjBjk+cjyrQb8kHMQ,,,N,0,0,,,2014-04-13 07:21,2014-04-15 07:43,admin,admin,
3528,143625,6971,40495,7842,0,N,N,N,CP_Phys,TT_Task,DT_FixedDrtn,TK_NotStart,CZA-TK-0535-2540,Inspection,8393,1814.666667,0,80,0,0,0,80,0,0,0,,,,2015-02-19 11:40,2015-03-01 11:40,,2014-07-23 07:00,2014-07-31 17:00,2014-07-23 07:00,2014-07-31 17:00,2014-07-23 07:00,2014-07-31 17:00,2015-02-19 11:40,2015-03-01 11:40,,PT_Normal,,,,,UFGXpfWuT0akcxkDxIZv+w,Fzo4vPMhtEmWd9lojfK50g,,,N,0,0,,,2014-04-13 07:21,2014-04-15 07:43,admin,admin,
3529,143626,6971,40496,7842,0,N,N,N,CP_Phys,TT_Task,DT_FixedDrtn,TK_NotStart,CZA-TK-0535-2550,"Jacking, Erection and Fit-up",8393,1814.666667,0,10,0,13.479961,13.479961,10,50,0,50,,,,2015-03-01 11:40,2015-03-02 11:40,,2014-08-02 07:00,2014-08-02 17:00,2014-08-02 07:00,2014-08-02 17:00,2014-08-02 07:00,2014-08-02 17:00,2015-03-01 11:40,2015-03-02 11:40,,PT_Normal,,,,,FoR5pqLmKk2fi1V9aaKn8w,U0n71wKut0eOBsJgMnVGXA,,,N,0,0,,,2014-04-13 07:21,2014-04-15 07:43,admin,admin,
3530,143627,6971,40496,7842,0,N,N,N,CP_Phys,TT_Task,DT_FixedDrtn,TK_NotStart,CZA-TK-0535-2560,Welding,8393,1814.666667,0,50,0,16.849951,16.849951,50,200,0,200,,,,2015-03-02 11:40,2015-03-08 11:40,,2014-08-03 07:00,2014-08-07 17:00,2014-08-03 07:00,2014-08-07 17:00,2014-08-03 07:00,2014-08-07 17:00,2015-03-02 11:40,2015-03-08 11:40,,PT_Normal,,,,,Ebk5+AkxGkm09w2ElIqGgg,wsWz/Bb+00GGke1XXXnU2g,,,N,0,0,,,2014-04-13 07:21,2014-04-15 07:43,admin,admin,
3531,143628,6971,40496,7842,0,N,N,N,CP_Phys,TT_Task,DT_FixedDrtn,TK_NotStart,CZA-TK-0535-2570,Inspection,8393,1814.666667,0,60,0,3.36999,3.36999,60,0,0,0,,,,2015-03-01 11:40,2015-03-08 11:40,,2014-08-02 07:00,2014-08-07 17:00,2014-08-02 07:00,2014-08-07 17:00,2014-08-02 07:00,2014-08-07 17:00,2015-03-01 11:40,2015-03-08 11:40,,PT_Normal,,,,,kkptEzvdfkWf51kHM6pSZA,yL9t8mjxHk+KZP4r1Y/v3w,,,N,0,0,,,2014-04-13 07:21,2014-04-15 07:43,admin,admin,
3532,143629,6971,40497,7842,0,N,N,N,CP_Phys,TT_Task,DT_FixedDrtn,TK_NotStart,CZA-TK-0535-2580,"Jacking,Erection and Fit-up",8393,1814.666667,0,10,0,162.857998,162.857998,10,50,0,50,,,,2015-03-08 11:40,2015-03-09 11:40,,2014-08-09 07:00,2014-08-09 17:00,2014-08-09 07:00,2014-08-09 17:00,2014-08-09 07:00,2014-08-09 17:00,2015-03-08 11:40,2015-03-09 11:40,,PT_Normal,,,,,+XTqw6Ok6kq9O8KIMHcEZQ,k+E+JsAoikqca6T7an+4Ag,,,N,0,0,,,2014-04-13 07:21,2014-04-15 07:43,admin,admin,
3533,143630,6971,40497,7842,0,N,N,N,CP_Phys,TT_Task,DT_FixedDrtn,TK_NotStart,CZA-TK-0535-2590,Welding,8393,1814.666667,0,50,0,203.572497,203.572497,50,200,0,200,,,,2015-03-09 11:40,2015-03-15 11:40,,2014-08-10 07:00,2014-08-14 17:00,2014-08-10 07:00,2014-08-14 17:00,2014-08-10 07:00,2014-08-14 17:00,2015-03-09 11:40,2015-03-15 11:40,,PT_Normal,,,,,ui0Ps4GMmEultZVYaJ588Q,DRgaZXny4kSa2mSTOoRlgg,,,N,0,0,,,2014-04-13 07:21,2014-04-15 07:43,admin,admin,
3534,143631,6971,40497,7842,0,N,N,N,CP_Phys,TT_Task,DT_FixedDrtn,TK_NotStart,CZA-TK-0535-2600,Inspection,8393,1814.666667,0,60,0,40.714499,40.714499,60,0,0,0,,,,2015-03-08 11:40,2015-03-15 11:40,,2014-08-09 07:00,2014-08-14 17:00,2014-08-09 07:00,2014-08-14 17:00,2014-08-09 07:00,2014-08-14 17:00,2015-03-08 11:40,2015-03-15 11:40,,PT_Normal,,,,,M5SX+Z0ia0qmVN7BqneATw,CsHC/C9VQ0KKd1mmm+SSug,,,N,0,0,,,2014-04-13 07:21,2014-04-15 07:43,admin,admin,
3535,143632,6971,40498,7842,0,N,N,N,CP_Phys,TT_Task,DT_FixedDrtn,TK_NotStart,CZA-TK-0535-2610,"Jacking,Erection and Fit-up",8393,1814.666667,0,10,0,189.558539,189.558539,10,50,0,50,,,,2015-03-15 11:40,2015-03-16 11:40,,2014-08-16 07:00,2014-08-16 17:00,2014-08-16 07:00,2014-08-16 17:00,2014-08-16 07:00,2014-08-16 17:00,2015-03-15 11:40,2015-03-16 11:40,,PT_Normal,,,,,/iR3Ypppp0W8ImbMpSZPfQ,89d7FtPaOUuXmgA87s3Wog,,,N,0,0,,,2014-04-13 07:21,2014-04-15 07:43,admin,admin,
3536,143633,6971,40498,7842,0,N,N,N,CP_Phys,TT_Task,DT_FixedDrtn,TK_NotStart,CZA-TK-0535-2620,Welding,8393,1814.666667,0,50,0,236.948173,236.948173,50,200,0,200,,,,2015-03-16 11:40,2015-03-22 11:40,,2014-08-17 07:00,2014-08-21 17:00,2014-08-17 07:00,2014-08-21 17:00,2014-08-17 07:00,2014-08-21 17:00,2015-03-16 11:40,2015-03-22 11:40,,PT_Normal,,,,,2zGnpJnmB0yOR7WMn2kC8g,1AXW2ULjekSL9ORVkwl4tw,,,N,0,0,,,2014-04-13 07:21,2014-04-15 07:43,admin,admin,
3537,143634,6971,40498,7842,0,N,N,N,CP_Phys,TT_Task,DT_FixedDrtn,TK_NotStart,CZA-TK-0535-2630,Inspection,8393,1814.666667,0,60,0,47.389635,47.389635,60,0,0,0,,,,2015-03-15 11:40,2015-03-22 11:40,,2014-08-16 07:00,2014-08-21 17:00,2014-08-16 07:00,2014-08-21 17:00,2014-08-16 07:00,2014-08-21 17:00,2015-03-15 11:40,2015-03-22 11:40,,PT_Normal,,,,,f62c5enqLUq6jHC5zJDd/g,hZTCmfVU90i3wT5kodRHxQ,,,N,0,0,,,2014-04-13 07:21,2014-04-15 07:43,admin,admin,
3538,143635,6971,40499,7842,0,N,N,N,CP_Phys,TT_Task,DT_FixedDrtn,TK_NotStart,CZA-TK-0535-2430,Laying and Fit-up,8393,1814.666667,0,20,0,0,0,20,100,0,100,,,,2015-02-02 11:40,2015-02-04 11:40,,2014-07-06 07:00,2014-07-07 17:00,2014-07-06 07:00,2014-07-07 17:00,2014-07-06 07:00,2014-07-07 17:00,2015-02-02 11:40,2015-02-04 11:40,,PT_Normal,,,,,Tx+Z3dSnk0KL0qGv7aYdPw,268tfcxMQ0qrhB/AhoGXTQ,,,N,0,0,,,2014-04-13 07:21,2014-04-15 07:43,admin,admin,
3539,143636,6971,40499,7842,0,N,N,N,CP_Phys,TT_Task,DT_FixedDrtn,TK_NotStart,CZA-TK-0535-2440,Welding,8393,1814.666667,0,60,0,0,0,60,180,0,180,,,,2015-02-04 11:40,2015-02-11 11:40,,2014-07-08 07:00,2014-07-14 17:00,2014-07-08 07:00,2014-07-14 17:00,2014-07-08 07:00,2014-07-14 17:00,2015-02-04 11:40,2015-02-11 11:40,,PT_Normal,,,,,7HZEfYqc1UqPzICPWpnbqA,SXVgdH4MuE6GQiVUB8h9Lw,,,N,0,0,,,2014-04-13 07:21,2014-04-15 07:43,admin,admin,
3540,143637,6971,40499,7842,0,N,N,N,CP_Phys,TT_Task,DT_FixedDrtn,TK_NotStart,CZA-TK-0535-2450,Inspection,8393,1814.666667,0,80,0,0,0,80,0,0,0,,,,2015-02-02 11:40,2015-02-11 11:40,,2014-07-06 07:00,2014-07-14 17:00,2014-07-06 07:00,2014-07-14 17:00,2014-07-06 07:00,2014-07-14 17:00,2015-02-02 11:40,2015-02-11 11:40,,PT_Normal,,,,,r5XIvzOhVUqa5VSF5isYEw,TQxGckmzPE2BAG0GUn8Cfw,,,N,0,0,,,2014-04-13 07:21,2014-04-15 07:43,admin,admin,
3541,143638,6971,40500,7842,0,N,N,N,CP_Phys,TT_Task,DT_FixedDrtn,TK_NotStart,CZA-TK-0535-2820,Installation of Primary and Secondary Seal,8393,1814.666667,0,40,0,0,0,40,0,0,0,,,,2015-04-22 15:00,2015-04-27 15:00,,2014-09-23 10:20,2014-09-28 10:20,2014-09-23 10:20,2014-09-28 10:20,2014-09-23 10:20,2014-09-28 10:20,2015-04-22 15:00,2015-04-27 15:00,,PT_Normal,,,,,0SlRg7Wea0muW81QesKdqg,R2ebpNaVZUKHzhEzs/QXSA,,,N,0,0,,,2014-04-13 07:21,2014-04-15 07:43,admin,admin,
3542,143639,6971,40500,7842,0,N,N,N,CP_Phys,TT_Task,DT_FixedDrtn,TK_NotStart,CZA-TK-0535-2830,Inspection,8393,1814.666667,0,10,0,0,0,10,0,0,0,,,,2015-04-27 15:00,2015-04-28 15:00,,2014-09-28 10:20,2014-09-29 10:20,2014-09-28 10:20,2014-09-29 10:20,2014-09-28 10:20,2014-09-29 10:20,2015-04-27 15:00,2015-04-28 15:00,,PT_Normal,,,,,eVuCZKy53kql2Uw5oEw/8Q,TXCMw2Imm0KwuSWfMtDu9g,,,N,0,0,,,2014-04-13 07:21,2014-04-15 07:43,admin,admin,
3543,143640,6971,40501,7842,0,N,N,N,CP_Phys,TT_Task,DT_FixedDrtn,TK_NotStart,CZA-TK-0535-2190,Laying and Fit-up,8393,1814.666667,0,20,0,466.304741,466.304741,20,100,0,100,,,,2014-11-30 11:40,2014-12-02 11:40,,2014-05-03 07:00,2014-05-04 17:00,2014-05-03 07:00,2014-05-04 17:00,2014-05-03 07:00,2014-05-04 17:00,2014-11-30 11:40,2014-12-02 11:40,,PT_Normal,,,,,YLcpGTeiBkq/Z+9IoLowiA,rkF3vwikCU+dxuosGZlXwg,,,N,0,0,,,2014-04-13 07:21,2014-04-15 07:43,admin,admin,
3544,143641,6971,40501,7842,0,N,N,N,CP_Phys,TT_Task,DT_FixedDrtn,TK_NotStart,CZA-TK-0535-2200,Welding,8393,1814.666667,0,60,0,582.880926,582.880926,60,240,0,240,,,,2014-12-02 11:40,2014-12-09 11:40,,2014-05-05 07:00,2014-05-11 17:00,2014-05-05 07:00,2014-05-11 17:00,2014-05-05 07:00,2014-05-11 17:00,2014-12-02 11:40,2014-12-09 11:40,,PT_Normal,,,,,iRoyKgjR6k6Nzvv04/4QQg,wRwUVR+AO0OO7xw7nJAV1A,,,N,0,0,,,2014-04-13 07:21,2014-04-15 07:43,admin,admin,
3545,143642,6971,40501,7842,0,N,N,N,CP_Phys,TT_Task,DT_FixedDrtn,TK_NotStart,CZA-TK-0535-2210,Inspection,8393,1814.666667,0,80,0,116.576185,116.576185,80,0,0,0,,,,2014-11-30 11:40,2014-12-09 11:40,,2014-05-03 07:00,2014-05-11 17:00,2014-05-03 07:00,2014-05-11 17:00,2014-05-03 07:00,2014-05-11 17:00,2014-11-30 11:40,2014-12-09 11:40,,PT_Normal,,,,,nyIAkWkEHUKSNU8HlTowJg,d2FzbzP1a0ewXO6JqAMhwA,,,N,0,0,,,2014-04-13 07:21,2014-04-15 07:43,admin,admin,
3546,143643,6971,40502,7842,0,N,N,N,CP_Phys,TT_Task,DT_FixedDrtn,TK_NotStart,CZA-TK-0535-2220,Erection and Fit-up,8393,1814.666667,0,10,0,52.694776,52.694776,10,50,0,50,,,,2014-12-09 11:40,2014-12-10 11:40,,2014-05-12 07:00,2014-05-12 17:00,2014-05-12 07:00,2014-05-12 17:00,2014-05-12 07:00,2014-05-12 17:00,2014-12-09 11:40,2014-12-10 11:40,,PT_Normal,,,,,N4ij6egxa0aU8iftCVzgrQ,A0q8h3E92EaWdQ0S/QJHLw,,,N,0,0,,,2014-04-13 07:21,2014-04-15 07:43,admin,admin,
3547,143644,6971,40502,7842,0,N,N,N,CP_Phys,TT_Task,DT_FixedDrtn,TK_NotStart,CZA-TK-0535-2230,Welding,8393,1814.666667,0,50,0,65.868469,65.868469,50,200,0,200,,,,2014-12-10 11:40,2014-12-16 11:40,,2014-05-13 07:00,2014-05-18 17:00,2014-05-13 07:00,2014-05-18 17:00,2014-05-13 07:00,2014-05-18 17:00,2014-12-10 11:40,2014-12-16 11:40,,PT_Normal,,,,,iv/Pgn4AEEyQWJt7NF63Mw,0wt8IadTe0OI5+rcU0aH0g,,,N,0,0,,,2014-04-13 07:21,2014-04-15 07:43,admin,admin,
3548,143645,6971,40502,7842,0,N,N,N,CP_Phys,TT_Task,DT_FixedDrtn,TK_NotStart,CZA-TK-0535-2240,Inspection,8393,1814.666667,0,60,0,13.173694,13.173694,60,0,0,0,,,,2014-12-09 11:40,2014-12-16 11:40,,2014-05-12 07:00,2014-05-18 17:00,2014-05-12 07:00,2014-05-18 17:00,2014-05-12 07:00,2014-05-18 17:00,2014-12-09 11:40,2014-12-16 11:40,,PT_Normal,,,,,c2J/cRnKFECbt6bEZfR2pw,b7qnQTcVfEqtUs6Uw9LCXw,,,N,0,0,,,2014-04-13 07:21,2014-04-15 07:43,admin,admin,
3549,143646,6971,40503,7842,0,N,N,N,CP_Phys,TT_Task,DT_FixedDrtn,TK_NotStart,CZA-TK-0535-2640,"Jacking, Erection and Fit-up",8393,1814.666667,0,10,0,243.731723,243.731723,10,10,0,10,,,,2015-03-22 11:40,2015-03-23 11:40,,2014-08-23 07:00,2014-08-23 17:00,2014-08-23 07:00,2014-08-23 17:00,2014-08-23 07:00,2014-08-23 17:00,2015-03-22 11:40,2015-03-23 11:40,,PT_Normal,,,,,M068W66UgUSena0E4dBPPg,WOKUQn7x1k6PGD9X9VbYjQ,,,N,0,0,,,2014-04-13 07:21,2014-04-15 07:43,admin,admin,
3550,143647,6971,40503,7842,0,N,N,N,CP_Phys,TT_Task,DT_FixedDrtn,TK_NotStart,CZA-TK-0535-2650,Welding,8393,1814.666667,0,50,0,304.664654,304.664654,50,200,0,200,,,,2015-03-23 11:40,2015-03-29 11:40,,2014-08-24 07:00,2014-08-28 17:00,2014-08-24 07:00,2014-08-28 17:00,2014-08-24 07:00,2014-08-28 17:00,2015-03-23 11:40,2015-03-29 11:40,,PT_Normal,,,,,ikYxdfeq1k2S+HLc7A6peg,Q9ZeW3IVckiM9gJRmbs0Hw,,,N,0,0,,,2014-04-13 07:21,2014-04-15 07:43,admin,admin,
3551,143648,6971,40503,7842,0,N,N,N,CP_Phys,TT_Task,DT_FixedDrtn,TK_NotStart,CZA-TK-0535-2660,Inspection,8393,1814.666667,0,60,0,60.932931,60.932931,60,0,0,0,,,,2015-03-22 11:40,2015-03-29 11:40,,2014-08-23 07:00,2014-08-28 17:00,2014-08-23 07:00,2014-08-28 17:00,2014-08-23 07:00,2014-08-28 17:00,2015-03-22 11:40,2015-03-29 11:40,,PT_Normal,,,,,GAtr6h19706hW0agtXlSSQ,ZP+/ynlyVkydTSl5co+57A,,,N,0,0,,,2014-04-13 07:21,2014-04-15 07:43,admin,admin,
3552,143649,6971,40504,7842,0,N,N,N,CP_Phys,TT_Task,DT_FixedDrtn,TK_NotStart,CZA-TK-0535-2670,"Jacking, Erection and Fit-up",8393,1814.666667,0,10,0,297.909505,297.909505,10,20,0,20,,,,2015-03-29 11:40,2015-03-30 11:40,,2014-08-30 07:00,2014-08-30 17:00,2014-08-30 07:00,2014-08-30 17:00,2014-08-30 07:00,2014-08-30 17:00,2015-03-29 11:40,2015-03-30 11:40,,PT_Normal,,,,,7VbvTWSbS0WJuWmO2Ap8FQ,fogmMuznM0SdcaS/fC34Uw,,,N,0,0,,,2014-04-13 07:21,2014-04-15 07:43,admin,admin,
3553,143650,6971,40504,7842,0,N,N,N,CP_Phys,TT_Task,DT_FixedDrtn,TK_NotStart,CZA-TK-0535-2680,Welding,8393,1814.666667,0,50,0,372.386881,372.386881,50,200,0,200,,,,2015-03-30 11:40,2015-04-05 11:40,,2014-08-31 07:00,2014-09-04 17:00,2014-08-31 07:00,2014-09-04 17:00,2014-08-31 07:00,2014-09-04 17:00,2015-03-30 11:40,2015-04-05 11:40,,PT_Normal,,,,,zN8SAye+UUa5L3tYctmrDQ,5Hh7bdZos02gvNEEx+4Ytw,,,N,0,0,,,2014-04-13 07:21,2014-04-15 07:43,admin,admin,
3554,143651,6971,40504,7842,0,N,N,N,CP_Phys,TT_Task,DT_FixedDrtn,TK_NotStart,CZA-TK-0535-2690,Inspection,8393,1814.666667,0,60,0,74.477376,74.477376,60,0,0,0,,,,2015-03-29 11:40,2015-04-05 11:40,,2014-08-30 07:00,2014-09-04 17:00,2014-08-30 07:00,2014-09-04 17:00,2014-08-30 07:00,2014-09-04 17:00,2015-03-29 11:40,2015-04-05 11:40,,PT_Normal,,,,,o3sDNGRFREudeOfCerST8Q,x6Db9G2RVUKRs6nVWHtLXQ,,,N,0,0,,,2014-04-13 07:21,2014-04-15 07:43,admin,admin,
3555,143652,6971,40505,7842,0,N,N,N,CP_Phys,TT_Task,DT_FixedDrtn,TK_NotStart,CZA-TK-0535-2700,"Jacking, Erection and Fit-up",8393,1814.666667,0,10,0,352.094509,352.094509,10,50,0,50,,,,2015-04-05 11:40,2015-04-06 11:40,,2014-09-06 07:00,2014-09-06 17:00,2014-09-06 07:00,2014-09-06 17:00,2014-09-06 07:00,2014-09-06 17:00,2015-04-05 11:40,2015-04-06 11:40,,PT_Normal,,,,,ifJWSBJsFU2VAbn+0bzRRQ,9tJCDUzBjE+3WZbp/U2lEQ,,,N,0,0,,,2014-04-13 07:21,2014-04-15 07:43,admin,admin,
3556,143653,6971,40505,7842,0,N,N,N,CP_Phys,TT_Task,DT_FixedDrtn,TK_NotStart,CZA-TK-0535-2710,Welding,8393,1814.666667,0,50,0,440.118137,440.118137,50,200,0,200,,,,2015-04-06 11:40,2015-04-12 11:40,,2014-09-07 07:00,2014-09-11 17:00,2014-09-07 07:00,2014-09-11 17:00,2014-09-07 07:00,2014-09-11 17:00,2015-04-06 11:40,2015-04-12 11:40,,PT_Normal,,,,,WUWIH0wo30aQscCx4MP0jA,k6BD8bNrhEGl4T0hd9Njag,,,N,0,0,,,2014-04-13 07:21,2014-04-15 07:43,admin,admin,
3557,143654,6971,40505,7842,0,N,N,N,CP_Phys,TT_Task,DT_FixedDrtn,TK_NotStart,CZA-TK-0535-2720,Inspection,8393,1814.666667,0,60,0,88.023627,88.023627,60,0,0,0,,,,2015-04-05 11:40,2015-04-12 11:40,,2014-09-06 07:00,2014-09-11 17:00,2014-09-06 07:00,2014-09-11 17:00,2014-09-06 07:00,2014-09-11 17:00,2015-04-05 11:40,2015-04-12 11:40,,PT_Normal,,,,,cEfWrAl8ukOocSSc55QBmA,zYSTLwrU90m2dcyYfTXIHQ,,,N,0,0,,,2014-04-13 07:21,2014-04-15 07:43,admin,admin,
3558,143655,6971,40506,7842,0,N,N,N,CP_Phys,TT_Task,DT_FixedDrtn,TK_NotStart,CZA-TK-0535-2730,"Jacking, Erection and Fit-up",8393,1814.666667,0,10,0,406.289101,406.289101,10,50,0,50,,,,2015-04-12 11:40,2015-04-13 11:40,,2014-09-13 07:00,2014-09-13 17:00,2014-09-13 07:00,2014-09-13 17:00,2014-09-13 07:00,2014-09-13 17:00,2015-04-12 11:40,2015-04-13 11:40,,PT_Normal,,,,,YqETW+Ftq0GIcXgP2pAJSA,2aIwm+hAbkmr6qX7PVYPxg,,,N,0,0,,,2014-04-13 07:21,2014-04-15 07:43,admin,admin,
3559,143656,6971,40506,7842,0,N,N,N,CP_Phys,TT_Task,DT_FixedDrtn,TK_NotStart,CZA-TK-0535-2740,Welding,8393,1814.666667,0,50,0,507.861376,507.861376,50,200,0,200,,,,2015-04-13 11:40,2015-04-19 11:40,,2014-09-14 07:00,2014-09-18 17:00,2014-09-14 07:00,2014-09-18 17:00,2014-09-14 07:00,2014-09-18 17:00,2015-04-13 11:40,2015-04-19 11:40,,PT_Normal,,,,,QPt23m1R+kaOCcLOjEr/9A,NfCEqpfB3UqIPuKwOadkEA,,,N,0,0,,,2014-04-13 07:21,2014-04-15 07:43,admin,admin,
3560,143657,6971,40506,7842,0,N,N,N,CP_Phys,TT_Task,DT_FixedDrtn,TK_NotStart,CZA-TK-0535-2750,Inspection,8393,1814.666667,0,60,0,101.572275,101.572275,60,0,0,0,,,,2015-04-12 11:40,2015-04-19 11:40,,2014-09-13 07:00,2014-09-18 17:00,2014-09-13 07:00,2014-09-18 17:00,2014-09-13 07:00,2014-09-18 17:00,2015-04-12 11:40,2015-04-19 11:40,,PT_Normal,,,,,QaAX2QIYT0+JENp0gLXObA,B85piUtwbE6G0lSFIxrXYw,,,N,0,0,,,2014-04-13 07:21,2014-04-15 07:43,admin,admin,
3561,143658,6971,40507,7842,0,N,N,N,CP_Phys,TT_Task,DT_FixedDrtn,TK_NotStart,CZA-TK-0535-2760,"Lay-out, Cutting, and Fit-up",8393,1814.666667,0,30,0,406.289101,406.289101,30,150,0,150,,,,2015-04-19 11:40,2015-04-22 11:40,,2014-09-20 07:00,2014-09-22 17:00,2014-09-20 07:00,2014-09-22 17:00,2014-09-20 07:00,2014-09-22 17:00,2015-04-19 11:40,2015-04-22 11:40,,PT_Normal,,,,,dxUM/G1X7EyQFix0iZDQTA,KkfrjSNduU2WcmcCznNR6g,,,N,0,0,,,2014-04-13 07:21,2014-04-15 07:43,admin,admin,
3562,143659,6971,40507,7842,0,N,N,N,CP_Phys,TT_Task,DT_FixedDrtn,TK_NotStart,CZA-TK-0535-2770,Welding,8393,1814.666667,0,50,0,507.861376,507.861376,50,150,0,150,,,,2015-04-22 11:40,2015-04-28 11:40,,2014-09-23 07:00,2014-09-28 17:00,2014-09-23 07:00,2014-09-28 17:00,2014-09-23 07:00,2014-09-28 17:00,2015-04-22 11:40,2015-04-28 11:40,,PT_Normal,,,,,kJOEYAM2IEeEOWTNvGQUpA,TucDObsKsUSaNTgAqmIDYQ,,,N,0,0,,,2014-04-13 07:21,2014-04-15 07:43,admin,admin,
3563,143660,6971,40507,7842,0,N,N,N,CP_Phys,TT_Task,DT_FixedDrtn,TK_NotStart,CZA-TK-0535-2780,Inspection,8393,1814.666667,0,80,0,101.572275,101.572275,80,0,0,0,,,,2015-04-19 11:40,2015-04-28 11:40,,2014-09-20 07:00,2014-09-28 17:00,2014-09-20 07:00,2014-09-28 17:00,2014-09-20 07:00,2014-09-28 17:00,2015-04-19 11:40,2015-04-28 11:40,,PT_Normal,,,,,jhVZwDuFM0KEy3QiOw9aNQ,CNPmdCqe8UC0YcMvMz1zJQ,,,N,0,0,,,2014-04-13 07:21,2014-04-15 07:43,admin,admin,
3564,143661,6971,40717,7842,0,N,N,N,CP_Phys,TT_Task,DT_FixedDrtn,TK_NotStart,CZA-TK-0535-2790,Erection and Fit-up,8393,1814.666667,0,20,0,0,0,20,0,0,0,,,,2015-04-19 11:40,2015-04-21 11:40,,2014-09-20 07:00,2014-09-21 17:00,2014-09-20 07:00,2014-09-21 17:00,2014-09-20 07:00,2014-09-21 17:00,2015-04-19 11:40,2015-04-21 11:40,,PT_Normal,,,,,7TBgNVXNdEC7ogJPVCzrYQ,AG6FXMFMbUC2enxKZ4NckA,,,N,0,0,,,2014-04-13 07:21,2014-04-15 07:43,admin,admin,
3565,143662,6971,40717,7842,0,N,N,N,CP_Phys,TT_Task,DT_FixedDrtn,TK_NotStart,CZA-TK-0535-2800,Welding,8393,1814.666667,0,50,0,0,0,50,0,0,0,,,,2015-04-21 11:40,2015-04-27 11:40,,2014-09-22 07:00,2014-09-27 17:00,2014-09-22 07:00,2014-09-27 17:00,2014-09-22 07:00,2014-09-27 17:00,2015-04-21 11:40,2015-04-27 11:40,,PT_Normal,,,,,mPlKLImYwE68kfuVQD+vmw,UTEMqeTNcUyqfLke3yJODA,,,N,0,0,,,2014-04-13 07:21,2014-04-15 07:43,admin,admin,
3566,143663,6971,40717,7842,0,N,N,N,CP_Phys,TT_Task,DT_FixedDrtn,TK_NotStart,CZA-TK-0535-2810,Inspection,8393,1814.666667,0,68.666667,0,0,0,68.666667,0,0,0,,,,2015-04-19 13:00,2015-04-27 11:40,,2014-09-20 08:20,2014-09-27 17:00,2014-09-20 08:20,2014-09-27 17:00,2014-09-20 08:20,2014-09-27 17:00,2015-04-19 13:00,2015-04-27 11:40,,PT_Normal,,,,,oija4phfm0y1YhVQppjD7A,Q6oSNHRB5keMVJgipXe0Lg,,,N,0,0,,,2014-04-13 07:21,2014-04-15 07:43,admin,admin,
3567,143664,6971,40718,7842,0,N,N,N,CP_Phys,TT_Task,DT_FixedDrtn,TK_NotStart,CZA-TK-0535-2250,Erection and Fit-up,8393,1814.666667,0,10,0,148.606065,148.606065,10,50,0,50,,,,2014-12-16 11:40,2014-12-17 11:40,,2014-05-19 07:00,2014-05-19 17:00,2014-05-19 07:00,2014-05-19 17:00,2014-05-19 07:00,2014-05-19 17:00,2014-12-16 11:40,2014-12-17 11:40,,PT_Normal,,,,,qDQiEIDTA0+BcAL7U6+nHA,+y9M03qwUUWZiOGdJoDDvw,,,N,0,0,,,2014-04-13 07:21,2014-04-15 07:43,admin,admin,
3568,143665,6971,40718,7842,0,N,N,N,CP_Phys,TT_Task,DT_FixedDrtn,TK_NotStart,CZA-TK-0535-2260,Welding,8393,1814.666667,0,50,0,185.757581,185.757581,50,200,0,200,,,,2014-12-17 11:40,2014-12-23 11:40,,2014-05-20 07:00,2014-05-25 17:00,2014-05-20 07:00,2014-05-25 17:00,2014-05-20 07:00,2014-05-25 17:00,2014-12-17 11:40,2014-12-23 11:40,,PT_Normal,,,,,J8zyMx5JJ0eCmSCxYLRYmw,TaR4NuNB4USwyuLz7FLr9A,,,N,0,0,,,2014-04-13 07:21,2014-04-15 07:43,admin,admin,
3569,143666,6971,40718,7842,0,N,N,N,CP_Phys,TT_Task,DT_FixedDrtn,TK_NotStart,CZA-TK-0535-2270,Inspection,8393,1814.666667,0,60,0,37.151516,37.151516,60,0,0,0,,,,2014-12-16 11:40,2014-12-23 11:40,,2014-05-19 07:00,2014-05-25 17:00,2014-05-19 07:00,2014-05-25 17:00,2014-05-19 07:00,2014-05-25 17:00,2014-12-16 11:40,2014-12-23 11:40,,PT_Normal,,,,,twFnHYwbQ0OrmebDlaf6SQ,FQ5JpQxQNUy5zW6Y5jbARQ,,,N,0,0,,,2014-04-13 07:21,2014-04-15 07:43,admin,admin,
3570,143667,6971,40719,7842,0,N,N,N,CP_Phys,TT_Task,DT_FixedDrtn,TK_NotStart,CZA-TK-0535-2280,"Cutting, Installation and Fit-up",8393,1814.666667,0,20,0,0,0,20,100,0,100,,,,2014-12-23 11:40,2014-12-25 11:40,,2014-05-26 07:00,2014-05-27 17:00,2014-05-26 07:00,2014-05-27 17:00,2014-05-26 07:00,2014-05-27 17:00,2014-12-23 11:40,2014-12-25 11:40,,PT_Normal,,,,,gO+/QY/h306cX3pQdolEuw,G/vPGLMJBEuQyptAgCbFSw,,,N,0,0,,,2014-04-13 07:21,2014-04-15 07:43,admin,admin,
3571,143668,6971,40719,7842,0,N,N,N,CP_Phys,TT_Task,DT_FixedDrtn,TK_NotStart,CZA-TK-0535-2290,Welding,8393,1814.666667,0,30,0,0,0,30,0,0,0,,,,2014-12-25 11:40,2014-12-29 11:40,,2014-05-28 07:00,2014-05-31 17:00,2014-05-28 07:00,2014-05-31 17:00,2014-05-28 07:00,2014-05-31 17:00,2014-12-25 11:40,2014-12-29 11:40,,PT_Normal,,,,,J0OmetxFhkWnAHciq5jAsA,02Nm5yAgn0iI7tgdv5hrbA,,,N,0,0,,,2014-04-13 07:21,2014-04-15 07:43,admin,admin,
3572,143669,6971,40719,7842,0,N,N,N,CP_Phys,TT_Task,DT_FixedDrtn,TK_NotStart,CZA-TK-0535-2300,Inspection,8393,1814.666667,0,50,0,0,0,50,0,0,0,,,,2014-12-23 11:40,2014-12-29 11:40,,2014-05-26 07:00,2014-05-31 17:00,2014-05-26 07:00,2014-05-31 17:00,2014-05-26 07:00,2014-05-31 17:00,2014-12-23 11:40,2014-12-29 11:40,,PT_Normal,,,,,/Mb3eoW7GkWSnxlMbhpzpg,Ki+V+aiVi0+gDGjWMx4dzg,,,N,0,0,,,2014-04-13 07:21,2014-04-15 07:43,admin,admin,
3573,143670,6971,40720,7842,0,N,N,N,CP_Phys,TT_Task,DT_FixedDrtn,TK_NotStart,CZA-TK-0535-2310,Erection and Fit-up,8393,1814.666667,0,20,0,0,0,20,0,0,0,,,,2014-12-23 11:40,2014-12-25 11:40,,2014-05-26 07:00,2014-05-27 17:00,2014-05-26 07:00,2014-05-27 17:00,2014-05-26 07:00,2014-05-27 17:00,2014-12-23 11:40,2014-12-25 11:40,,PT_Normal,,,,,YC4OazO9XEyUVaFFFhhyWA,6IZvuMe8wUWjptLXziRdcg,,,N,0,0,,,2014-04-13 07:21,2014-04-15 07:43,admin,admin,
3574,143671,6971,40720,7842,0,N,N,N,CP_Phys,TT_Task,DT_FixedDrtn,TK_NotStart,CZA-TK-0535-2320,Welding,8393,1814.666667,0,30,0,0,0,30,90,0,90,,,,2014-12-25 11:40,2014-12-29 11:40,,2014-05-28 07:00,2014-05-31 17:00,2014-05-28 07:00,2014-05-31 17:00,2014-05-28 07:00,2014-05-31 17:00,2014-12-25 11:40,2014-12-29 11:40,,PT_Normal,,,,,YmOQ3hyJqUKt0vKt4gPFmw,J5ZIrpmYK0aY82Dkqrb0OQ,,,N,0,0,,,2014-04-13 07:21,2014-04-15 07:43,admin,admin,
3575,143672,6971,40720,7842,0,N,N,N,CP_Phys,TT_Task,DT_FixedDrtn,TK_NotStart,CZA-TK-0535-2330,Inspection,8393,1814.666667,0,47.5,0,0,0,47.5,0,0,0,,,,2014-12-23 14:10,2014-12-29 11:40,,2014-05-26 09:30,2014-05-31 17:00,2014-05-26 09:30,2014-05-31 17:00,2014-05-26 09:30,2014-05-31 17:00,2014-12-23 14:10,2014-12-29 11:40,,PT_Normal,,,,,SrPa6k9mK0aYA4b2CvOKmA,jwz+mLRyL0W4xPwHRzpEhA,,,N,0,0,,,2014-04-13 07:21,2014-04-15 07:43,admin,admin,
3576,143673,6971,40512,7842,0,N,N,N,CP_Phys,TT_Task,DT_FixedDrtn,TK_NotStart,CZA-TK-0535-2340,Laying and Fit-up,8393,1814.666667,0,30,0,64.982763,64.982763,30,150,0,150,,,,2014-12-29 11:40,2015-01-01 11:40,,2014-06-01 07:00,2014-06-03 17:00,2014-06-01 07:00,2014-06-03 17:00,2014-06-01 07:00,2014-06-03 17:00,2014-12-29 11:40,2015-01-01 11:40,,PT_Normal,,,,,rWUiS96ms0yaVD9zU/BqNA,hDZ9JpTC9U+rbx55syOywA,,,N,0,0,,,2014-04-13 07:21,2014-04-15 07:43,admin,admin,
3577,143674,6971,40512,7842,0,N,N,N,CP_Phys,TT_Task,DT_FixedDrtn,TK_NotStart,CZA-TK-0535-2350,Welding,8393,1814.666667,0,70,0,81.228454,81.228454,70,210,0,210,,,,2015-01-01 11:40,2015-01-10 11:40,,2014-06-04 07:00,2014-06-11 17:00,2014-06-04 07:00,2014-06-11 17:00,2014-06-04 07:00,2014-06-11 17:00,2015-01-01 11:40,2015-01-10 11:40,,PT_Normal,,,,,G2D3Ph1fIU2xiRjTDKV/RQ,rs7dIWZf+0m48dzD4vzyfg,,,N,0,0,,,2014-04-13 07:21,2014-04-15 07:43,admin,admin,
3578,143675,6971,40512,7842,0,N,N,N,CP_Phys,TT_Task,DT_FixedDrtn,TK_NotStart,CZA-TK-0535-2360,Inspection,8393,1814.666667,0,100,0,16.245691,16.245691,100,0,0,0,,,,2014-12-29 11:40,2015-01-10 11:40,,2014-06-01 07:00,2014-06-11 17:00,2014-06-01 07:00,2014-06-11 17:00,2014-06-01 07:00,2014-06-11 17:00,2014-12-29 11:40,2015-01-10 11:40,,PT_Normal,,,,,aqeGY2dvvE+F+kUFOd/52A,bufXskdjE0e0/dC+ziaLuA,,,N,0,0,,,2014-04-13 07:21,2014-04-15 07:43,admin,admin,
3579,143676,6971,40513,7842,0,N,N,N,CP_Phys,TT_Task,DT_FixedDrtn,TK_NotStart,CZA-TK-0535-2370,"Laying, Cutting all Holes and Fit-up",8393,1814.666667,0,20,0,287.608839,287.608839,20,40,0,40,,,,2015-01-10 11:40,2015-01-12 11:40,,2014-06-12 07:00,2014-06-14 17:00,2014-06-12 07:00,2014-06-14 17:00,2014-06-12 07:00,2014-06-14 17:00,2015-01-10 11:40,2015-01-12 11:40,,PT_Normal,,,,,r0GD5YXd30qp/YIe8j27LQ,c0e6qFpS4kScsRCg08VesA,,,N,0,0,,,2014-04-13 07:21,2014-04-15 07:43,admin,admin,
3580,143677,6971,40513,7842,0,N,N,N,CP_Phys,TT_Task,DT_FixedDrtn,TK_NotStart,CZA-TK-0535-2380,Welding,8393,1854.666667,40,60,0,359.511049,359.511049,60,180,0,180,,,,2015-01-14 11:40,2015-01-21 11:40,,2014-06-12 07:00,2014-06-18 17:00,2014-06-12 07:00,2014-06-18 17:00,2014-06-12 07:00,2014-06-18 17:00,2015-01-14 11:40,2015-01-21 11:40,,PT_Normal,,,,,1D2NdenrpES0gQKfNUcceA,Aj8e6zl7ykiogA0u88PIgQ,,,N,0,0,,,2014-04-13 07:21,2014-04-15 07:43,admin,admin,
3581,143678,6971,40513,7842,0,N,N,N,CP_Phys,TT_Task,DT_FixedDrtn,TK_NotStart,CZA-TK-0535-2390,Inspection,8393,1814.666667,0,100,0,71.90221,71.90221,100,0,0,0,,,,2015-01-10 11:40,2015-01-21 11:40,,2014-06-12 07:00,2014-06-23 17:00,2014-06-12 07:00,2014-06-23 17:00,2014-06-12 07:00,2014-06-23 17:00,2015-01-10 11:40,2015-01-21 11:40,,PT_Normal,,,,,1AOxfz1+WUyS0LgEH5tBCg,kMqHkdQHf0yduIsY6P20zw,,,N,0,0,,,2014-04-13 07:21,2014-04-15 07:43,admin,admin,
3582,143679,6971,40514,7842,0,N,N,N,CP_Phys,TT_Task,DT_FixedDrtn,TK_NotStart,CZA-TK-0535-2160,Laying and Fit-up,8393,1814.666667,0,10,0,141.556928,141.556928,10,50,0,50,,,,2014-11-25 11:40,2014-11-26 11:40,,2014-04-28 07:00,2014-04-28 17:00,2014-04-28 07:00,2014-04-28 17:00,2014-04-28 07:00,2014-04-28 17:00,2014-11-25 11:40,2014-11-26 11:40,,PT_Normal,,,,,q/Q8PzZAbEyXaaAH8Hp+Cg,3Pu0Ih49eUyU7xVsBhnAkw,,,N,0,0,,,2014-04-13 07:21,2014-04-15 07:43,admin,admin,
3583,143680,6971,40514,7842,0,N,N,N,CP_Phys,TT_Task,DT_FixedDrtn,TK_NotStart,CZA-TK-0535-2170,Welding,8393,1814.666667,0,30,0,176.946159,176.946159,30,90,0,90,,,,2014-11-26 11:40,2014-11-30 11:40,,2014-04-29 07:00,2014-05-01 17:00,2014-04-29 07:00,2014-05-01 17:00,2014-04-29 07:00,2014-05-01 17:00,2014-11-26 11:40,2014-11-30 11:40,,PT_Normal,,,,,WiII7bHVPkeGoCxhzlvfmA,OkH3nY/pvka0MYE1+QYlSA,,,N,0,0,,,2014-04-13 07:21,2014-04-15 07:43,admin,admin,
3584,143681,6971,40514,7842,0,N,N,N,CP_Phys,TT_Task,DT_FixedDrtn,TK_NotStart,CZA-TK-0535-2180,Inspection,8393,1814.666667,0,40,0,35.389232,35.389232,40,0,0,0,,,,2014-11-25 11:40,2014-11-30 11:40,,2014-04-28 07:00,2014-05-01 17:00,2014-04-28 07:00,2014-05-01 17:00,2014-04-28 07:00,2014-05-01 17:00,2014-11-25 11:40,2014-11-30 11:40,,PT_Normal,,,,,Fd7nx61zZEWz4FWexaLg6A,1pzi7RDtiU2aVASFC8Ji0w,,,N,0,0,,,2014-04-13 07:21,2014-04-15 07:43,admin,admin,
3585,143682,6971,40078,7842,0,N,N,N,CP_Phys,TT_Task,DT_FixedDrtn,TK_NotStart,CZA-TK-0535-2860,Tank Calibration,8393,1814.666667,0,50,0,1465.013311,1465.013311,50,0,0,0,,,,2015-06-20 15:00,2015-06-25 15:00,,2014-11-20 10:20,2014-11-26 10:20,2014-11-20 10:20,2014-11-26 10:20,2014-11-20 10:20,2014-11-26 10:20,2015-06-20 15:00,2015-06-25 15:00,,PT_Normal,,,,,x2D/0k2LoECxK3su1KFdDg,Y0BPVLGzfU+7UiEVw4pggQ,,,N,0,0,,,2014-04-13 07:21,2014-04-15 07:43,admin,admin,
3586,143683,6971,40078,7842,0,N,N,N,CP_Phys,TT_Task,DT_FixedDrtn,TK_NotStart,CZA-TK-0535-2870,Tank Handover,8393,1814.666667,1814.666667,20,0,1465.013311,1465.013311,20,0,0,0,,,,2015-06-25 15:00,2015-06-28 15:00,,2014-11-26 10:20,2014-11-29 10:20,2014-11-26 10:20,2014-11-29 10:20,2014-11-26 10:20,2014-11-29 10:20,2015-06-25 15:00,2015-06-28 15:00,,PT_Normal,,,,,lyqY7uNf1E+M+Y5/28ZqCg,ugYtx42j7kGZe9lsVUpjTQ,,,N,0,0,,,2014-04-13 07:21,2014-04-15 07:43,admin,admin,
3587,143684,6971,40099,7842,0,N,N,N,CP_Phys,TT_Task,DT_FixedDrtn,TK_NotStart,CZA-TK-0526-3470,Tank Calibration,8404,0,0,50,0,587.384315,587.384315,50,0,0,0,,,,2015-06-20 15:00,2015-06-25 15:00,,2015-06-20 15:00,2015-06-25 15:00,2015-06-20 15:00,2015-06-25 15:00,2015-06-20 15:00,2015-06-25 15:00,2015-06-20 15:00,2015-06-25 15:00,,PT_Normal,,,,,SId2V6T//k6r2XPcUukbsA,G8u9j97G+0WcNUxWRysJAA,,,Y,0,0,,,2014-04-13 07:21,2014-04-14 16:04,admin,admin,
3588,143685,6971,40099,7842,0,N,N,N,CP_Phys,TT_Task,DT_FixedDrtn,TK_NotStart,CZA-TK-0526-3480,Tank Handover,8404,0,0,20,0,587.384315,587.384315,20,0,0,0,,,,2015-06-25 15:00,2015-06-28 15:00,,2015-06-25 15:00,2015-06-28 15:00,2015-06-25 15:00,2015-06-28 15:00,2015-06-25 15:00,2015-06-28 15:00,2015-06-25 15:00,2015-06-28 15:00,,PT_Normal,,,,,Sc0OztIsokeY+Cce4JCx6A,Z8Fy9hjsqUmzzH06E0XASw,,,Y,0,0,,,2014-04-13 07:21,2014-04-14 16:04,admin,admin,
3589,143686,6971,40100,7842,0,N,N,N,CP_Phys,TT_Task,DT_FixedDrtn,TK_NotStart,CZA-TK-0526-3460,"Blasting and Painting Inside, Outside and Bottom Plates",8404,0,0,110,0,1762.152945,1762.152945,110,0,0,0,,,,2015-06-07 15:00,2015-06-20 15:00,,2015-06-07 15:00,2015-06-20 15:00,2015-06-07 15:00,2015-06-20 15:00,2015-06-07 15:00,2015-06-20 15:00,2015-06-07 15:00,2015-06-20 15:00,,PT_Normal,,,,,oQY5Erfwrke8gVP+370mpw,UfvvhrAjk06EQfaeemY+Rg,,,Y,0,0,,,2014-04-13 07:21,2014-04-14 16:04,admin,admin,
3590,143687,6971,39992,7842,0,N,N,N,CP_Phys,TT_Task,DT_FixedDrtn,TK_NotStart,CZA-TK-0526-2680,Cutting of Annular Plates and Bottom Plates,8509,3060,0,10,0,511.08,511.08,10,0,0,0,,,,2015-03-02 13:00,2015-03-03 13:00,,2014-03-10 13:00,2014-03-11 13:00,2014-03-10 13:00,2014-03-11 13:00,2014-03-10 13:00,2014-03-11 13:00,2015-03-02 13:00,2015-03-03 13:00,,PT_Normal,,,,,4ufh8trQCU682fIKCskntg,szIg/AW8K0uWZ+lwvb/Rlw,,,N,0,0,,,2014-04-13 07:21,2014-04-15 07:43,admin,admin,
3591,143688,6971,39992,7842,0,N,N,N,CP_Phys,TT_Task,DT_FixedDrtn,TK_NotStart,CZA-TK-0526-2690,"Cutting,Bevelling & Rolling Shell No. 1",8509,3060,0,10,0,317.0916,317.0916,10,0,0,0,,,,2015-03-03 13:00,2015-03-04 13:00,,2014-03-11 13:00,2014-03-12 13:00,2014-03-11 13:00,2014-03-12 13:00,2014-03-11 13:00,2014-03-12 13:00,2015-03-03 13:00,2015-03-04 13:00,,PT_Normal,,,,,2fQHsYuTgEaapsm/sn8E9Q,yCM0J7ijSkirFD0FI04aKA,,,N,0,0,,,2014-04-13 07:21,2014-04-15 07:43,admin,admin,
3592,143689,6971,39992,7842,0,N,N,N,CP_Phys,TT_Task,DT_FixedDrtn,TK_NotStart,CZA-TK-0526-2700,"Cutting, Fit-up and Weld of Shell Nozzles, Manholes & Other Appurtanances",8509,3060,0,10,0,0,0,10,0,0,0,,,,2015-03-04 13:00,2015-03-05 13:00,,2014-03-12 13:00,2014-03-13 13:00,2014-03-12 13:00,2014-03-13 13:00,2014-03-12 13:00,2014-03-13 13:00,2015-03-04 13:00,2015-03-05 13:00,,PT_Normal,,,,,LbbMaCv3lUWnlNFSXdkZmg,FJP6TzWLpEuF3uXHQ/v2xA,,,N,0,0,,,2014-04-13 07:21,2014-04-15 07:43,admin,admin,
3593,143690,6971,39992,7842,0,N,N,N,CP_Phys,TT_Task,DT_FixedDrtn,TK_NotStart,CZA-TK-0526-2710,"Cutting, Bevelling  & Rolling Shell No.3",8509,3060,0,50,0,264.57,264.57,50,0,0,0,,,,2015-03-07 09:00,2015-03-12 09:00,,2014-03-15 09:00,2014-03-20 09:00,2014-03-15 09:00,2014-03-20 09:00,2014-03-15 09:00,2014-03-20 09:00,2015-03-07 09:00,2015-03-12 09:00,,PT_Normal,,,,,w8TuEfjdBEONDrJm3kotpQ,lFQ5ryVYgE68VyVfRa35Ww,,,N,0,0,,,2014-04-13 07:21,2014-04-15 07:43,admin,admin,
3594,143691,6971,39992,7842,0,N,N,N,CP_Phys,TT_Task,DT_FixedDrtn,TK_NotStart,CZA-TK-0526-2720,Cutting of Floating Roof Plates,8509,3060,0,10,0,0,0,10,0,0,0,,,,2015-03-12 09:00,2015-03-14 09:00,,2014-03-20 09:00,2014-03-22 09:00,2014-03-20 09:00,2014-03-22 09:00,2014-03-20 09:00,2014-03-22 09:00,2015-03-12 09:00,2015-03-14 09:00,,PT_Normal,,,,,SJtippONqkyyQEzuA3Lxxw,L4qUiip/jE67JIRh7/Okog,,,N,0,0,,,2014-04-13 07:21,2014-04-15 07:43,admin,admin,
3595,143692,6971,39992,7842,0,N,N,N,CP_Phys,TT_Task,DT_FixedDrtn,TK_NotStart,CZA-TK-0526-2730,"Cutting, Fit-up and Welding  of Pontoon",8509,3060,0,20,0,387.6,387.6,20,0,0,0,,,,2015-03-12 09:00,2015-03-15 09:00,,2014-03-20 09:00,2014-03-23 09:00,2014-03-20 09:00,2014-03-23 09:00,2014-03-20 09:00,2014-03-23 09:00,2015-03-12 09:00,2015-03-15 09:00,,PT_Normal,,,,,VKE2TEgLYUSejjStInSujw,mAcXghAReEyDbE73Tw3pMQ,,,N,0,0,,,2014-04-13 07:21,2014-04-15 07:43,admin,admin,
3596,143693,6971,39992,7842,0,N,N,N,CP_Phys,TT_Task,DT_FixedDrtn,TK_NotStart,CZA-TK-0526-2740,Cutting of Floating Roof Legs and Manholes,8509,3060,0,100,0,0,0,100,0,0,0,,,,2015-03-15 09:00,2015-03-26 09:00,,2014-03-23 09:00,2014-04-03 09:00,2014-03-23 09:00,2014-04-03 09:00,2014-03-23 09:00,2014-04-03 09:00,2015-03-15 09:00,2015-03-26 09:00,,PT_Normal,,,,,Ba4PT/C8DUup42L+6H1Rfg,1xE0hI6AsEeEPUPHhsWEyQ,,,N,0,0,,,2014-04-13 07:21,2014-04-15 07:43,admin,admin,
3597,143694,6971,39992,7842,0,N,N,N,CP_Phys,TT_Task,DT_FixedDrtn,TK_NotStart,CZA-TK-0526-2750,"Cutting, Bevelling & Rolling Shell No.4",8509,3060,0,40,0,226.86,226.86,40,0,0,0,,,,2015-03-26 09:00,2015-03-31 09:00,,2014-04-03 09:00,2014-04-08 09:00,2014-04-03 09:00,2014-04-08 09:00,2014-04-03 09:00,2014-04-08 09:00,2015-03-26 09:00,2015-03-31 09:00,,PT_Normal,,,,,XBpzERL/gkaB/p57xb7vNg,6pa0hiAQX0af3m5SqxLCXg,,,N,0,0,,,2014-04-13 07:21,2014-04-15 07:43,admin,admin,
3598,143695,6971,39992,7842,0,N,N,N,CP_Phys,TT_Task,DT_FixedDrtn,TK_NotStart,CZA-TK-0526-2760,"Cutting, Bevelling & Rolling Shell No.5",8509,3060,0,10,0,226.86,226.86,10,0,0,0,,,,2015-03-31 09:00,2015-04-01 09:00,,2014-04-08 09:00,2014-04-09 09:00,2014-04-08 09:00,2014-04-09 09:00,2014-04-08 09:00,2014-04-09 09:00,2015-03-31 09:00,2015-04-01 09:00,,PT_Normal,,,,,TgDAZT9JNUGcdlvxJ7cjWw,54oaJaiNcUmuULh+W+LL8A,,,N,0,0,,,2014-04-13 07:21,2014-04-15 07:43,admin,admin,
3599,143696,6971,39992,7842,0,N,N,N,CP_Phys,TT_Task,DT_FixedDrtn,TK_NotStart,CZA-TK-0526-2770,"Cutting, Bevelling & Rolling Shell No.6",8509,3060,0,10,0,226.86,226.86,10,0,0,0,,,,2015-04-01 09:00,2015-04-02 09:00,,2014-04-09 09:00,2014-04-10 09:00,2014-04-09 09:00,2014-04-10 09:00,2014-04-09 09:00,2014-04-10 09:00,2015-04-01 09:00,2015-04-02 09:00,,PT_Normal,,,,,nHM9G0YuAk+MNKd+eL49vw,thnTigYL7kGk5UftwSylpw,,,N,0,0,,,2014-04-13 07:21,2014-04-15 07:43,admin,admin,
3600,143697,6971,39992,7842,0,N,N,N,CP_Phys,TT_Task,DT_FixedDrtn,TK_NotStart,CZA-TK-0526-2780,"Cutting, Bevelling & Rolling Shell no.7",8509,3060,0,10,0,188.91,188.91,10,0,0,0,,,,2015-04-02 09:00,2015-04-04 09:00,,2014-04-10 09:00,2014-04-12 09:00,2014-04-10 09:00,2014-04-12 09:00,2014-04-10 09:00,2014-04-12 09:00,2015-04-02 09:00,2015-04-04 09:00,,PT_Normal,,,,,e0qrgoOqzkimy0Y4T3NVrA,B8LiIhtJrUqoge1Kbch51w,,,N,0,0,,,2014-04-13 07:21,2014-04-15 07:43,admin,admin,
3601,143698,6971,39992,7842,0,N,N,N,CP_Phys,TT_Task,DT_FixedDrtn,TK_NotStart,CZA-TK-0526-2790,"Cutting, Fit-up & Welding Roof Structures & Compression Ring",8509,3060,0,10,0,424.5,424.5,10,0,0,0,,,,2015-04-04 09:00,2015-04-05 09:00,,2014-04-12 09:00,2014-04-13 09:00,2014-04-12 09:00,2014-04-13 09:00,2014-04-12 09:00,2014-04-13 09:00,2015-04-04 09:00,2015-04-05 09:00,,PT_Normal,,,,,KD5Tw1xMwk6ALLdo5x261A,7cBRQPnOy0i3t3C98q/ywA,,,N,0,0,,,2014-04-13 07:21,2014-04-15 07:43,admin,admin,
3602,143699,6971,39992,7842,0,N,N,N,CP_Phys,TT_Task,DT_FixedDrtn,TK_NotStart,CZA-TK-0526-2800,Cutting of Roof Plates,8509,3060,0,60,0,0,0,60,0,0,0,,,,2015-04-05 09:00,2015-04-12 09:00,,2014-04-13 09:00,2014-04-20 09:00,2014-04-13 09:00,2014-04-20 09:00,2014-04-13 09:00,2014-04-20 09:00,2015-04-05 09:00,2015-04-12 09:00,,PT_Normal,,,,,w9aW2StNfkefQROIAvouig,WUGWCIWT2U2xPdKhPllFkA,,,N,0,0,,,2014-04-13 07:21,2014-04-15 07:43,admin,admin,
3603,143700,6971,39992,7842,0,N,N,N,CP_Phys,TT_Task,DT_FixedDrtn,TK_NotStart,CZA-TK-0526-2810,"Cutting, Fit-up & Welding Roof Platform, Gratings and Handrails",8509,3060,0,20,0,0,0,20,0,0,0,,,,2015-04-12 09:00,2015-04-14 09:00,,2014-04-20 09:00,2014-04-22 09:00,2014-04-20 09:00,2014-04-22 09:00,2014-04-20 09:00,2014-04-22 09:00,2015-04-12 09:00,2015-04-14 09:00,,PT_Normal,,,,,x1Hk/0fjJEmC1/lTCZYlUA,evSiYgBIwECBZ0kPGVo3bg,,,N,0,0,,,2014-04-13 07:21,2014-04-15 07:43,admin,admin,
3604,143701,6971,39992,7842,0,N,N,N,CP_Phys,TT_Task,DT_FixedDrtn,TK_NotStart,CZA-TK-0526-2820,"Cutting, Fit-up and Welding of Stairways",8509,3060,0,100,0,0,0,100,0,0,0,,,,2015-04-13 15:00,2015-04-25 15:00,,2014-04-21 15:00,2014-05-03 15:00,2014-04-21 15:00,2014-05-03 15:00,2014-04-21 15:00,2014-05-03 15:00,2015-04-13 15:00,2015-04-25 15:00,,PT_Normal,,,,,V6FEB/uIak2hvQwLNnVKxg,S+bN7xSZ30uYBU7g/iHsjg,,,N,0,0,,,2014-04-13 07:21,2014-04-15 07:43,admin,admin,
3605,143702,6971,39992,7842,0,N,N,N,CP_Phys,TT_Task,DT_FixedDrtn,TK_NotStart,CZA-TK-0526-2830,"Cutting, Fit-up and Welding of Roof Nozzles, Manholes and Other Appurtanances",8509,3060,2818,70,0,0,0,70,0,0,0,,,,2015-04-25 15:00,2015-05-03 15:00,,2014-05-03 15:00,2014-05-11 15:00,2014-05-03 15:00,2014-05-11 15:00,2014-05-03 15:00,2014-05-11 15:00,2015-04-25 15:00,2015-05-03 15:00,,PT_Normal,,,,,WbfsG4rsvEGAJA1Aec1n/A,T+oXBqwJm0aChU9k67bNIw,,,N,0,0,,,2014-04-13 07:21,2014-04-15 07:43,admin,admin,
3606,143703,6971,40011,7842,0,N,N,N,CP_Phys,TT_Mile,DT_FixedDrtn,TK_NotStart,CZA-TK-0526-2840,Foundation Takeover From Client,,0,0,0,0,0,0,0,0,0,0,2014-12-15 09:00,,,2014-12-15 09:00,2014-12-15 09:00,,2014-12-15 09:00,2014-12-15 09:00,2014-12-15 09:00,2014-12-15 09:00,2014-12-15 09:00,2014-12-15 09:00,2014-12-15 09:00,2014-12-15 09:00,CS_MSO,PT_Normal,,,,,VW3C2zhpkkC2ZOvtgQMKgQ,K9dl2E21okiCwQNfEUXlPg,,,N,0,0,,,2014-04-13 07:21,2014-04-13 08:09,admin,admin,
3607,143704,6971,40097,7842,0,N,N,N,CP_Phys,TT_Task,DT_FixedDrtn,TK_NotStart,CZA-TK-0526-3450,"Filling, Holding and Draining of Water",8404,0,0,70,0,2936.921575,2936.921575,70,0,0,0,,,,2015-05-30 15:00,2015-06-07 15:00,,2015-05-30 15:00,2015-06-07 15:00,2015-05-30 15:00,2015-06-07 15:00,2015-05-30 15:00,2015-06-07 15:00,2015-05-30 15:00,2015-06-07 15:00,,PT_Normal,,,,,MK1yBXgPvkeXXoZ83iqjnQ,FRmdyVqHDEiA+gA5jyOoRg,,,Y,0,0,,,2014-04-13 07:21,2014-04-14 16:04,admin,admin,
3608,143705,6971,40523,7842,0,N,N,N,CP_Phys,TT_Task,DT_FixedDrtn,TK_NotStart,CZA-TK-0526-2880,Erection and Fit-up,8404,242,0,10,0,111.868968,111.868968,10,30,0,30,,,,2015-01-17 11:00,2015-01-18 11:00,,2014-12-20 09:00,2014-12-21 09:00,2014-12-20 09:00,2014-12-21 09:00,2014-12-20 09:00,2014-12-21 09:00,2015-01-17 11:00,2015-01-18 11:00,,PT_Normal,,,,,H19vF1k70kKCywjubjOj5A,KsUfTOOmrkmCXwD9/ZPRNQ,,,N,0,0,,,2014-04-13 07:21,2014-04-14 16:04,admin,admin,
3609,143706,6971,40523,7842,0,N,N,N,CP_Phys,TT_Task,DT_FixedDrtn,TK_NotStart,CZA-TK-0526-2890,Welding,8404,242,0,40,0,139.83621,139.83621,40,120,0,120,,,,2015-01-18 11:00,2015-01-22 11:00,,2014-12-21 09:00,2014-12-25 09:00,2014-12-21 09:00,2014-12-25 09:00,2014-12-21 09:00,2014-12-25 09:00,2015-01-18 11:00,2015-01-22 11:00,,PT_Normal,,,,,5y2yFR+WOkGMvoGmn+Iyzg,rXlchXs0nUac45XBx7fyJg,,,N,0,0,,,2014-04-13 07:21,2014-04-14 16:04,admin,admin,
3610,143707,6971,40523,7842,0,N,N,N,CP_Phys,TT_Task,DT_FixedDrtn,TK_NotStart,CZA-TK-0526-2900,Inspection,8404,242,0,50,0,27.967242,27.967242,50,0,0,0,,,,2015-01-17 11:00,2015-01-22 11:00,,2014-12-20 09:00,2014-12-25 09:00,2014-12-20 09:00,2014-12-25 09:00,2014-12-20 09:00,2014-12-25 09:00,2015-01-17 11:00,2015-01-22 11:00,,PT_Normal,,,,,l6x6sDkb3ESNieXrXQ5UpQ,5CXJX1im702x8Q431fjiyw,,,N,0,0,,,2014-04-13 07:21,2014-04-14 16:04,admin,admin,
3611,143708,6971,40524,7842,0,N,N,N,CP_Phys,TT_Task,DT_FixedDrtn,TK_NotStart,CZA-TK-0526-2910,Erection and Fit-up,8404,242,0,10,0,138.814706,138.814706,10,30,0,30,,,,2015-01-22 11:00,2015-01-24 11:00,,2014-12-25 09:00,2014-12-27 09:00,2014-12-25 09:00,2014-12-27 09:00,2014-12-25 09:00,2014-12-27 09:00,2015-01-22 11:00,2015-01-24 11:00,,PT_Normal,,,,,ONuyRQnz9Eq4EzqUtVUYNA,i9DhciO7dUe7+EKEdrG3TQ,,,N,0,0,,,2014-04-13 07:21,2014-04-14 16:04,admin,admin,
3612,143709,6971,40524,7842,0,N,N,N,CP_Phys,TT_Task,DT_FixedDrtn,TK_NotStart,CZA-TK-0526-2920,Welding,8404,242,0,40,0,173.518383,173.518383,40,120,0,120,,,,2015-01-24 11:00,2015-01-28 11:00,,2014-12-27 09:00,2014-12-31 09:00,2014-12-27 09:00,2014-12-31 09:00,2014-12-27 09:00,2014-12-31 09:00,2015-01-24 11:00,2015-01-28 11:00,,PT_Normal,,,,,dceN2SkzU0GZbC8APZi/0A,bvDBZ3sKv02OE1lCA3eM/A,,,N,0,0,,,2014-04-13 07:21,2014-04-14 16:04,admin,admin,
3613,143710,6971,40524,7842,0,N,N,N,CP_Phys,TT_Task,DT_FixedDrtn,TK_NotStart,CZA-TK-0526-2930,Inspection,8404,242,0,50,0,34.703677,34.703677,50,0,0,0,,,,2015-01-22 11:00,2015-01-28 11:00,,2014-12-25 09:00,2014-12-31 09:00,2014-12-25 09:00,2014-12-31 09:00,2014-12-25 09:00,2014-12-31 09:00,2015-01-22 11:00,2015-01-28 11:00,,PT_Normal,,,,,w9THsEsaa0ysCYjTxvlmKQ,yOcFpQkgVEu2c52reAj3DQ,,,N,0,0,,,2014-04-13 07:21,2014-04-14 16:04,admin,admin,
3614,143711,6971,40525,7842,0,N,N,N,CP_Phys,TT_Task,DT_FixedDrtn,TK_NotStart,CZA-TK-0526-2940,Erection and Fit-up,8404,242,0,10,0,0,0,10,30,0,30,,,,2015-01-28 11:00,2015-01-29 11:00,,2014-12-31 09:00,2015-01-01 09:00,2014-12-31 09:00,2015-01-01 09:00,2014-12-31 09:00,2015-01-01 09:00,2015-01-28 11:00,2015-01-29 11:00,,PT_Normal,,,,,ehz+b67CJkayrEjsbgIMXg,YEpHnHov6EOeGug0E3m5hQ,,,N,0,0,,,2014-04-13 07:21,2014-04-14 16:04,admin,admin,
3615,143712,6971,40525,7842,0,N,N,N,CP_Phys,TT_Task,DT_FixedDrtn,TK_NotStart,CZA-TK-0526-2950,Welding,8404,242,0,40,0,0,0,40,120,0,120,,,,2015-01-29 11:00,2015-02-03 11:00,,2015-01-01 09:00,2015-01-06 09:00,2015-01-01 09:00,2015-01-06 09:00,2015-01-01 09:00,2015-01-06 09:00,2015-01-29 11:00,2015-02-03 11:00,,PT_Normal,,,,,ozE5i1xRpEW8bJybzaMmfA,Gh8emkKGJEqC2gMQjawRmw,,,N,0,0,,,2014-04-13 07:21,2014-04-14 16:04,admin,admin,
3616,143713,6971,40525,7842,0,N,N,N,CP_Phys,TT_Task,DT_FixedDrtn,TK_NotStart,CZA-TK-0526-2960,Inspection,8404,242,0,50,0,0,0,50,0,0,0,,,,2015-01-28 11:00,2015-02-03 11:00,,2014-12-31 09:00,2015-01-06 09:00,2014-12-31 09:00,2015-01-06 09:00,2014-12-31 09:00,2015-01-06 09:00,2015-01-28 11:00,2015-02-03 11:00,,PT_Normal,,,,,ZknMfP+fAEOTUp5clDhScQ,B4JAgL9JoEWobzuHQLq9yA,,,N,0,0,,,2014-04-13 07:21,2014-04-14 16:04,admin,admin,
3617,143714,6971,40526,7842,0,N,N,N,CP_Phys,TT_Task,DT_FixedDrtn,TK_NotStart,CZA-TK-0526-2970,"Cutting, Installation and Fit-up",8404,242,0,20,0,0,0,20,60,0,60,,,,2015-02-03 11:00,2015-02-05 11:00,,2015-01-06 09:00,2015-01-08 09:00,2015-01-06 09:00,2015-01-08 09:00,2015-01-06 09:00,2015-01-08 09:00,2015-02-03 11:00,2015-02-05 11:00,,PT_Normal,,,,,xL1aMXwoYkSV5rURonDb9Q,JI+UFHtsuE6nbvaYekcf/Q,,,N,0,0,,,2014-04-13 07:21,2014-04-14 16:04,admin,admin,
3618,143715,6971,40526,7842,0,N,N,N,CP_Phys,TT_Task,DT_FixedDrtn,TK_NotStart,CZA-TK-0526-2980,Welding,8404,242,0,30,0,0,0,30,60,0,60,,,,2015-02-05 11:00,2015-02-09 11:00,,2015-01-08 09:00,2015-01-12 09:00,2015-01-08 09:00,2015-01-12 09:00,2015-01-08 09:00,2015-01-12 09:00,2015-02-05 11:00,2015-02-09 11:00,,PT_Normal,,,,,m3hVhLwzq06bkWqxH9OslQ,XRqSY0YGyEat41wF2wOOdg,,,N,0,0,,,2014-04-13 07:21,2014-04-14 16:04,admin,admin,
3619,143716,6971,40526,7842,0,N,N,N,CP_Phys,TT_Task,DT_FixedDrtn,TK_NotStart,CZA-TK-0526-2990,Inspection,8404,242,0,50,0,0,0,50,0,0,0,,,,2015-02-03 11:00,2015-02-09 11:00,,2015-01-06 09:00,2015-01-12 09:00,2015-01-06 09:00,2015-01-12 09:00,2015-01-06 09:00,2015-01-12 09:00,2015-02-03 11:00,2015-02-09 11:00,,PT_Normal,,,,,XjFIHhZ/R0mlISIj/72Kmg,ZHZaugu/qkmahRJmfDIGBg,,,N,0,0,,,2014-04-13 07:21,2014-04-14 16:04,admin,admin,
3620,143717,6971,40527,7842,0,N,N,N,CP_Phys,TT_Task,DT_FixedDrtn,TK_NotStart,CZA-TK-0526-3000,Laying & Fit-up,8404,242,0,30,0,0,0,30,90,0,90,,,,2015-02-05 15:00,2015-02-09 15:00,,2015-01-08 13:00,2015-01-12 13:00,2015-01-08 13:00,2015-01-12 13:00,2015-01-08 13:00,2015-01-12 13:00,2015-02-05 15:00,2015-02-09 15:00,,PT_Normal,,,,,DB/vaIh+3U63q7Y96pzMKw,F53DGHJ+sk+R+oiOlz7MOg,,,N,0,0,,,2014-04-13 07:21,2014-04-14 16:04,admin,admin,
3621,143718,6971,40527,7842,0,N,N,N,CP_Phys,TT_Task,DT_FixedDrtn,TK_NotStart,CZA-TK-0526-3010,Welding,8404,242,0,70,0,0,0,70,210,0,210,,,,2015-02-09 15:00,2015-02-17 15:00,,2015-01-12 13:00,2015-01-20 13:00,2015-01-12 13:00,2015-01-20 13:00,2015-01-12 13:00,2015-01-20 13:00,2015-02-09 15:00,2015-02-17 15:00,,PT_Normal,,,,,iakLcFfF60+wdq+q88A3lQ,2KsoTqT/akGsdMTNJbEucg,,,N,0,0,,,2014-04-13 07:21,2014-04-14 16:04,admin,admin,
3622,143719,6971,40527,7842,0,N,N,N,CP_Phys,TT_Task,DT_FixedDrtn,TK_NotStart,CZA-TK-0526-3020,Inspection,8404,242,0,100,0,0,0,100,0,0,0,,,,2015-02-05 15:00,2015-02-17 15:00,,2015-01-08 13:00,2015-01-20 13:00,2015-01-08 13:00,2015-01-20 13:00,2015-01-08 13:00,2015-01-20 13:00,2015-02-05 15:00,2015-02-17 15:00,,PT_Normal,,,,,aAKFb5jtikyOxpfxJUn1Lw,61Jh36Yl5UySofXo5/A1ew,,,N,0,0,,,2014-04-13 07:21,2014-04-14 16:04,admin,admin,
3623,143720,6971,40528,7842,0,N,N,N,CP_Phys,TT_Task,DT_FixedDrtn,TK_NotStart,CZA-TK-0526-3030,"Cutting of All Holes, Laying and Fit-up",8404,242,0,40,0,169.681506,169.681506,40,120,0,120,,,,2015-02-17 15:00,2015-02-22 15:00,,2015-01-20 13:00,2015-01-25 13:00,2015-01-20 13:00,2015-01-25 13:00,2015-01-20 13:00,2015-01-25 13:00,2015-02-17 15:00,2015-02-22 15:00,,PT_Normal,,,,,3T5DBBsn20OoIzkwd+WEfQ,szU1sderSkWIAZugNkfQeQ,,,N,0,0,,,2014-04-13 07:21,2014-04-14 16:04,admin,admin,
3624,143721,6971,40528,7842,0,N,N,N,CP_Phys,TT_Task,DT_FixedDrtn,TK_NotStart,CZA-TK-0526-3040,Welding of Sleeves and Plates,8404,242,0,100,0,212.101882,212.101882,100,300,0,300,,,,2015-02-22 15:00,2015-03-05 15:00,,2015-01-25 13:00,2015-02-05 13:00,2015-01-25 13:00,2015-02-05 13:00,2015-01-25 13:00,2015-02-05 13:00,2015-02-22 15:00,2015-03-05 15:00,,PT_Normal,,,,,mzD/0iLyk0K3ybUvFNSjAw,43JKNbfHFE6h+W9s/XiFiw,,,N,0,0,,,2014-04-13 07:21,2014-04-14 16:04,admin,admin,
3625,143722,6971,40528,7842,0,N,N,N,CP_Phys,TT_Task,DT_FixedDrtn,TK_NotStart,CZA-TK-0526-3050,Installation of Leg Support,8404,242,0,10,0,21.210188,21.210188,10,0,0,0,,,,2015-03-05 15:00,2015-03-07 15:00,,2015-02-05 13:00,2015-02-07 13:00,2015-02-05 13:00,2015-02-07 13:00,2015-02-05 13:00,2015-02-07 13:00,2015-03-05 15:00,2015-03-07 15:00,,PT_Normal,,,,,swY4SUT7okO6mpmThckFYg,8+li8FtP1U6dfO4GFocqiQ,,,N,0,0,,,2014-04-13 07:21,2014-04-14 16:04,admin,admin,
3626,143723,6971,40528,7842,0,N,N,N,CP_Phys,TT_Task,DT_FixedDrtn,TK_NotStart,CZA-TK-0526-3060,Inspection,8404,242,0,150,0,21.210188,21.210188,150,0,0,0,,,,2015-02-17 15:00,2015-03-07 15:00,,2015-01-20 13:00,2015-02-07 13:00,2015-01-20 13:00,2015-02-07 13:00,2015-01-20 13:00,2015-02-07 13:00,2015-02-17 15:00,2015-03-07 15:00,,PT_Normal,,,,,2+qhPOMXfEWWIrilN7O24A,MN7K6J2PzEGsynzPooYGvQ,,,N,0,0,,,2014-04-13 07:21,2014-04-14 16:04,admin,admin,
3627,143724,6971,40529,7842,0,N,N,N,CP_Phys,TT_Task,DT_FixedDrtn,TK_NotStart,CZA-TK-0526-3070,Erection and Fit-up,8404,242,0,10,0,115.822074,115.822074,10,30,0,30,,,,2015-03-07 15:00,2015-03-08 15:00,,2015-02-07 13:00,2015-02-08 13:00,2015-02-07 13:00,2015-02-08 13:00,2015-02-07 13:00,2015-02-08 13:00,2015-03-07 15:00,2015-03-08 15:00,,PT_Normal,,,,,LQqSiH/iGk2WGZaEHo3oDg,DZM4Z/0WhUGwiYO+W5SEPw,,,N,0,0,,,2014-04-13 07:21,2014-04-14 16:04,admin,admin,
3628,143725,6971,40529,7842,0,N,N,N,CP_Phys,TT_Task,DT_FixedDrtn,TK_NotStart,CZA-TK-0526-3080,Welding,8404,242,0,40,0,144.777593,144.777593,40,120,0,120,,,,2015-03-08 15:00,2015-03-12 15:00,,2015-02-08 13:00,2015-02-12 13:00,2015-02-08 13:00,2015-02-12 13:00,2015-02-08 13:00,2015-02-12 13:00,2015-03-08 15:00,2015-03-12 15:00,,PT_Normal,,,,,BuTMeeutB02NzXB9Issbcg,WMOiXZ4xkEugDcesPo5oTg,,,N,0,0,,,2014-04-13 07:21,2014-04-14 16:04,admin,admin,
3629,143726,6971,40529,7842,0,N,N,N,CP_Phys,TT_Task,DT_FixedDrtn,TK_NotStart,CZA-TK-0526-3090,Inspection,8404,242,0,50,0,28.955519,28.955519,50,0,0,0,,,,2015-03-07 15:00,2015-03-12 15:00,,2015-02-07 13:00,2015-02-12 13:00,2015-02-07 13:00,2015-02-12 13:00,2015-02-07 13:00,2015-02-12 13:00,2015-03-07 15:00,2015-03-12 15:00,,PT_Normal,,,,,yM3WNXiDPkuF0wTcEPrIOg,t2Yl+BntoUOvznUywYhgQw,,,N,0,0,,,2014-04-13 07:21,2014-04-14 16:04,admin,admin,
3630,143727,6971,40530,7842,0,N,N,N,CP_Phys,TT_Task,DT_FixedDrtn,TK_NotStart,CZA-TK-0526-3100,Erection and Fit-up,8404,242,0,10,0,99.313587,99.313587,10,30,0,30,,,,2015-03-12 15:00,2015-03-14 15:00,,2015-02-12 13:00,2015-02-14 13:00,2015-02-12 13:00,2015-02-14 13:00,2015-02-12 13:00,2015-02-14 13:00,2015-03-12 15:00,2015-03-14 15:00,,PT_Normal,,,,,5vsVKCe/+Umxg1PGGj8Tgg,O4EiDot4FUWylpR4ibZxvw,,,N,0,0,,,2014-04-13 07:21,2014-04-14 16:04,admin,admin,
3631,143728,6971,40530,7842,0,N,N,N,CP_Phys,TT_Task,DT_FixedDrtn,TK_NotStart,CZA-TK-0526-3110,Welding,8404,242,0,40,0,124.141984,124.141984,40,120,0,120,,,,2015-03-14 15:00,2015-03-18 15:00,,2015-02-14 13:00,2015-02-18 13:00,2015-02-14 13:00,2015-02-18 13:00,2015-02-14 13:00,2015-02-18 13:00,2015-03-14 15:00,2015-03-18 15:00,,PT_Normal,,,,,6U0zFNsb0UiNU9zv+QTiSA,6fuYJphQ40SqWi0JCME+lA,,,N,0,0,,,2014-04-13 07:21,2014-04-14 16:04,admin,admin,
3632,143729,6971,40530,7842,0,N,N,N,CP_Phys,TT_Task,DT_FixedDrtn,TK_NotStart,CZA-TK-0526-3120,Inspection,8404,242,0,50,0,24.828397,24.828397,50,0,0,0,,,,2015-03-12 15:00,2015-03-18 15:00,,2015-02-12 13:00,2015-02-18 13:00,2015-02-12 13:00,2015-02-18 13:00,2015-02-12 13:00,2015-02-18 13:00,2015-03-12 15:00,2015-03-18 15:00,,PT_Normal,,,,,TZjprNEgCk+9cYQpSFjICg,pLuw4t44y0iVqzKp3AQmWw,,,N,0,0,,,2014-04-13 07:21,2014-04-14 16:04,admin,admin,
3633,143730,6971,40740,7842,0,N,N,N,CP_Phys,TT_Task,DT_FixedDrtn,TK_NotStart,CZA-TK-0526-3130,Erection and Fit-up,8404,242,0,10,0,99.313587,99.313587,10,30,0,30,,,,2015-03-18 15:00,2015-03-19 15:00,,2015-02-18 13:00,2015-02-19 13:00,2015-02-18 13:00,2015-02-19 13:00,2015-02-18 13:00,2015-02-19 13:00,2015-03-18 15:00,2015-03-19 15:00,,PT_Normal,,,,,YucVFU3PO0i2HpTQ3a/c9w,EODCMa8cZ0im52LR8ELIzQ,,,N,0,0,,,2014-04-13 07:21,2014-04-14 16:04,admin,admin,
3634,143731,6971,40740,7842,0,N,N,N,CP_Phys,TT_Task,DT_FixedDrtn,TK_NotStart,CZA-TK-0526-3140,Welding,8404,242,0,40,0,124.141984,124.141984,40,120,0,120,,,,2015-03-19 15:00,2015-03-24 15:00,,2015-02-19 13:00,2015-02-24 13:00,2015-02-19 13:00,2015-02-24 13:00,2015-02-19 13:00,2015-02-24 13:00,2015-03-19 15:00,2015-03-24 15:00,,PT_Normal,,,,,ZzMHcWX95kGOp9uBEOigRw,c1R5Jxv5e0OCISVZMTMifQ,,,N,0,0,,,2014-04-13 07:21,2014-04-14 16:04,admin,admin,
3635,143732,6971,40740,7842,0,N,N,N,CP_Phys,TT_Task,DT_FixedDrtn,TK_NotStart,CZA-TK-0526-3150,Inspection,8404,242,0,50,0,24.828397,24.828397,50,0,0,0,,,,2015-03-18 15:00,2015-03-24 15:00,,2015-02-18 13:00,2015-02-24 13:00,2015-02-18 13:00,2015-02-24 13:00,2015-02-18 13:00,2015-02-24 13:00,2015-03-18 15:00,2015-03-24 15:00,,PT_Normal,,,,,cIWAzotU8EOAmpW7sCcGEw,z54muURIoUKJZjYwu2GB3Q,,,N,0,0,,,2014-04-13 07:21,2014-04-14 16:04,admin,admin,
3636,143733,6971,40741,7842,0,N,N,N,CP_Phys,TT_Task,DT_FixedDrtn,TK_NotStart,CZA-TK-0526-3160,Erection and Fit-up,8404,242,0,10,0,99.313587,99.313587,10,30,0,30,,,,2015-03-24 15:00,2015-03-25 15:00,,2015-02-24 13:00,2015-02-25 13:00,2015-02-24 13:00,2015-02-25 13:00,2015-02-24 13:00,2015-02-25 13:00,2015-03-24 15:00,2015-03-25 15:00,,PT_Normal,,,,,okIKQtFz0kmQ3uFRMsCj9A,80RcfzVQs0SGzjxHjZJHmg,,,N,0,0,,,2014-04-13 07:21,2014-04-14 16:04,admin,admin,
3637,143734,6971,40741,7842,0,N,N,N,CP_Phys,TT_Task,DT_FixedDrtn,TK_NotStart,CZA-TK-0526-3170,Welding,8404,242,0,40,0,124.141984,124.141984,40,120,0,120,,,,2015-03-25 15:00,2015-03-30 15:00,,2015-02-25 13:00,2015-03-02 13:00,2015-02-25 13:00,2015-03-02 13:00,2015-02-25 13:00,2015-03-02 13:00,2015-03-25 15:00,2015-03-30 15:00,,PT_Normal,,,,,LUH8TtjpDUWQNRH90QVnBQ,htKYgpLnkUCuLpiVLwPaRw,,,N,0,0,,,2014-04-13 07:21,2014-04-14 16:04,admin,admin,
3638,143735,6971,40741,7842,0,N,N,N,CP_Phys,TT_Task,DT_FixedDrtn,TK_NotStart,CZA-TK-0526-3180,Inspection,8404,242,0,50,0,24.828397,24.828397,50,0,0,0,,,,2015-03-24 15:00,2015-03-30 15:00,,2015-02-24 13:00,2015-03-02 13:00,2015-02-24 13:00,2015-03-02 13:00,2015-02-24 13:00,2015-03-02 13:00,2015-03-24 15:00,2015-03-30 15:00,,PT_Normal,,,,,tASoUb8n/E22JUZitSFC2A,kId2TNMgkkqsA3twldtJzA,,,N,0,0,,,2014-04-13 07:21,2014-04-14 16:04,admin,admin,
3639,143736,6971,40742,7842,0,N,N,N,CP_Phys,TT_Task,DT_FixedDrtn,TK_NotStart,CZA-TK-0526-3190,Erection and Fit-up,8404,242,0,10,0,82.700034,82.700034,10,30,0,30,,,,2015-03-30 15:00,2015-03-31 15:00,,2015-03-02 13:00,2015-03-03 13:00,2015-03-02 13:00,2015-03-03 13:00,2015-03-02 13:00,2015-03-03 13:00,2015-03-30 15:00,2015-03-31 15:00,,PT_Normal,,,,,VlwTtVRKgUqscIC+wr6FRg,sxZVxnBNEUyy8jN4OVSI+Q,,,N,0,0,,,2014-04-13 07:21,2014-04-14 16:04,admin,admin,
3640,143737,6971,40742,7842,0,N,N,N,CP_Phys,TT_Task,DT_FixedDrtn,TK_NotStart,CZA-TK-0526-3200,Welding,8404,252,10,40,0,103.375043,103.375043,40,120,0,120,,,,2015-04-01 15:00,2015-04-06 15:00,,2015-03-03 13:00,2015-03-08 13:00,2015-03-03 13:00,2015-03-08 13:00,2015-03-03 13:00,2015-03-08 13:00,2015-04-01 15:00,2015-04-06 15:00,,PT_Normal,,,,,5c8aVSu2TEW8no6a/0j4tg,3/pczu0nH0WfAmczyLx86Q,,,N,0,0,,,2014-04-13 07:21,2014-04-14 16:04,admin,admin,
3641,143738,6971,40742,7842,0,N,N,N,CP_Phys,TT_Task,DT_FixedDrtn,TK_NotStart,CZA-TK-0526-3210,Inspection,8404,242,0,50,0,20.675009,20.675009,50,0,0,0,,,,2015-03-31 15:00,2015-04-06 15:00,,2015-03-03 13:00,2015-03-09 13:00,2015-03-03 13:00,2015-03-09 13:00,2015-03-03 13:00,2015-03-09 13:00,2015-03-31 15:00,2015-04-06 15:00,,PT_Normal,,,,,WAaZibGajE6T7M2N93RGOA,PAVQvVrr606UKuXqs3RmfA,,,N,0,0,,,2014-04-13 07:21,2014-04-14 16:04,admin,admin,
3642,143739,6971,40743,7842,0,N,N,N,CP_Phys,TT_Task,DT_FixedDrtn,TK_NotStart,CZA-TK-0526-3220,"Cutting, Installation and Fit-up",8404,242,0,20,0,0,0,20,60,0,60,,,,2015-04-06 15:00,2015-04-08 15:00,,2015-03-09 13:00,2015-03-11 13:00,2015-03-09 13:00,2015-03-11 13:00,2015-03-09 13:00,2015-03-11 13:00,2015-04-06 15:00,2015-04-08 15:00,,PT_Normal,,,,,Kwcb0OJUOUysvKO9YylhDA,bMtvGY/OBkGK688xnckXeQ,,,N,0,0,,,2014-04-13 07:21,2014-04-14 16:04,admin,admin,
3643,143740,6971,40743,7842,0,N,N,N,CP_Phys,TT_Task,DT_FixedDrtn,TK_NotStart,CZA-TK-0526-3230,Welding,8404,242,0,30,0,0,0,30,90,0,90,,,,2015-04-08 15:00,2015-04-12 15:00,,2015-03-11 13:00,2015-03-15 13:00,2015-03-11 13:00,2015-03-15 13:00,2015-03-11 13:00,2015-03-15 13:00,2015-04-08 15:00,2015-04-12 15:00,,PT_Normal,,,,,bxfGxfvW7Eqkdac0da+8og,Ah1KW3+nO0WHjtjvngjCVA,,,N,0,0,,,2014-04-13 07:21,2014-04-14 16:04,admin,admin,
3644,143741,6971,40743,7842,0,N,N,N,CP_Phys,TT_Task,DT_FixedDrtn,TK_NotStart,CZA-TK-0526-3240,Inspection,8404,242,0,50,0,0,0,50,0,0,0,,,,2015-04-06 15:00,2015-04-12 15:00,,2015-03-09 13:00,2015-03-15 13:00,2015-03-09 13:00,2015-03-15 13:00,2015-03-09 13:00,2015-03-15 13:00,2015-04-06 15:00,2015-04-12 15:00,,PT_Normal,,,,,sJtT4zWiL0WSTj1cKQ5qww,5BAy6+SbZEqB7c0kptmXaw,,,N,0,0,,,2014-04-13 07:21,2014-04-14 16:04,admin,admin,
3645,143742,6971,40744,7842,0,N,N,N,CP_Phys,TT_Task,DT_FixedDrtn,TK_NotStart,CZA-TK-0526-3250,Erection and Fit-up,8404,242,0,20,0,185.835395,185.835395,20,60,0,60,,,,2015-04-12 15:00,2015-04-14 15:00,,2015-03-15 13:00,2015-03-17 13:00,2015-03-15 13:00,2015-03-17 13:00,2015-03-15 13:00,2015-03-17 13:00,2015-04-12 15:00,2015-04-14 15:00,,PT_Normal,,,,,vI8JIg8nUEqeBax1p2IY8Q,UygGQDAnF0yBe8IwgQNhpw,,,N,0,0,,,2014-04-13 07:21,2014-04-14 16:04,admin,admin,
3646,143743,6971,40744,7842,0,N,N,N,CP_Phys,TT_Task,DT_FixedDrtn,TK_NotStart,CZA-TK-0526-3260,Welding,8404,242,0,50,0,232.294244,232.294244,50,150,0,150,,,,2015-04-14 15:00,2015-04-20 15:00,,2015-03-17 13:00,2015-03-23 13:00,2015-03-17 13:00,2015-03-23 13:00,2015-03-17 13:00,2015-03-23 13:00,2015-04-14 15:00,2015-04-20 15:00,,PT_Normal,,,,,0UeSE+2ROU2GhrW5PKnDOw,8lJzKMBJUkW4Z5ZaKLG9Zg,,,N,0,0,,,2014-04-13 07:21,2014-04-14 16:04,admin,admin,
3647,143744,6971,40744,7842,0,N,N,N,CP_Phys,TT_Task,DT_FixedDrtn,TK_NotStart,CZA-TK-0526-3270,Inspection,8404,242,0,70,0,46.458849,46.458849,70,0,0,0,,,,2015-04-12 15:00,2015-04-20 15:00,,2015-03-15 13:00,2015-03-23 13:00,2015-03-15 13:00,2015-03-23 13:00,2015-03-15 13:00,2015-03-23 13:00,2015-04-12 15:00,2015-04-20 15:00,,PT_Normal,,,,,6ZIIl4DwdUSSk0vJueiXkQ,sHYVJe0nukGQRdiT/cuA2A,,,N,0,0,,,2014-04-13 07:21,2014-04-14 16:04,admin,admin,
3648,143745,6971,40745,7842,0,N,N,N,CP_Phys,TT_Task,DT_FixedDrtn,TK_NotStart,CZA-TK-0526-3280,Laying and Fit-up,8404,242,0,20,0,0,0,20,60,0,60,,,,2015-04-20 15:00,2015-04-22 15:00,,2015-03-23 13:00,2015-03-25 13:00,2015-03-23 13:00,2015-03-25 13:00,2015-03-23 13:00,2015-03-25 13:00,2015-04-20 15:00,2015-04-22 15:00,,PT_Normal,,,,,SvmpeVgHXk6dfxUBTltqoA,VLXGtEBBx0qoGzxKpSzFwA,,,N,0,0,,,2014-04-13 07:21,2014-04-14 16:04,admin,admin,
3649,143746,6971,40745,7842,0,N,N,N,CP_Phys,TT_Task,DT_FixedDrtn,TK_NotStart,CZA-TK-0526-3290,Welding,8404,242,0,50,0,0,0,50,150,0,150,,,,2015-04-22 15:00,2015-04-28 15:00,,2015-03-25 13:00,2015-03-31 13:00,2015-03-25 13:00,2015-03-31 13:00,2015-03-25 13:00,2015-03-31 13:00,2015-04-22 15:00,2015-04-28 15:00,,PT_Normal,,,,,QAMUff8naEiX6Yi86i+EEA,pPLo74Dll0O0bR6c+ghJSw,,,N,0,0,,,2014-04-13 07:21,2014-04-14 16:04,admin,admin,
3650,143747,6971,40745,7842,0,N,N,N,CP_Phys,TT_Task,DT_FixedDrtn,TK_NotStart,CZA-TK-0526-3300,Inspection,8404,242,0,70,0,0,0,70,0,0,0,,,,2015-04-20 15:00,2015-04-28 15:00,,2015-03-23 13:00,2015-03-31 13:00,2015-03-23 13:00,2015-03-31 13:00,2015-03-23 13:00,2015-03-31 13:00,2015-04-20 15:00,2015-04-28 15:00,,PT_Normal,,,,,x+ML+gDYUkqphDQ79eC1Lg,/w/SunGuWUqDUth8/yEwbw,,,N,0,0,,,2014-04-13 07:21,2014-04-14 16:04,admin,admin,
3651,143748,6971,40746,7842,0,N,N,N,CP_Phys,TT_Task,DT_FixedDrtn,TK_NotStart,CZA-TK-0526-3310,Laying and Fit-up,8404,242,0,10,0,0,0,10,30,0,30,,,,2015-04-28 15:00,2015-04-29 15:00,,2015-03-31 13:00,2015-04-01 13:00,2015-03-31 13:00,2015-04-01 13:00,2015-03-31 13:00,2015-04-01 13:00,2015-04-28 15:00,2015-04-29 15:00,,PT_Normal,,,,,JvSwS7/fME+LoHhQ3tukxQ,rRKQ/BpLu0Ol2Mj2WqDFdQ,,,N,0,0,,,2014-04-13 07:21,2014-04-14 16:04,admin,admin,
3652,143749,6971,40746,7842,0,N,N,N,CP_Phys,TT_Task,DT_FixedDrtn,TK_NotStart,CZA-TK-0526-3320,Welding,8404,242,0,30,0,0,0,30,90,0,90,,,,2015-04-29 15:00,2015-05-03 15:00,,2015-04-01 13:00,2015-04-05 13:00,2015-04-01 13:00,2015-04-05 13:00,2015-04-01 13:00,2015-04-05 13:00,2015-04-29 15:00,2015-05-03 15:00,,PT_Normal,,,,,+CwC7eS+aUKUA5U0Jduw4w,QF8qnGLMeEWN5+uB9adA6g,,,N,0,0,,,2014-04-13 07:21,2014-04-14 16:04,admin,admin,
3653,143750,6971,40746,7842,0,N,N,N,CP_Phys,TT_Task,DT_FixedDrtn,TK_NotStart,CZA-TK-0526-3330,Inspection,8404,242,0,40,0,0,0,40,0,0,0,,,,2015-04-28 15:00,2015-05-03 15:00,,2015-03-31 13:00,2015-04-05 13:00,2015-03-31 13:00,2015-04-05 13:00,2015-03-31 13:00,2015-04-05 13:00,2015-04-28 15:00,2015-05-03 15:00,,PT_Normal,,,,,ijarfj7XzkiQp3KuyyRA0g,UiZ6E+x990K4uLmEzjfOuA,,,N,0,0,,,2014-04-13 07:21,2014-04-14 16:04,admin,admin,
3654,143751,6971,40747,7842,0,N,N,N,CP_Phys,TT_Task,DT_FixedDrtn,TK_NotStart,CZA-TK-0526-3340,Installation and Fit-up,8404,242,0,20,0,0,0,20,60,0,60,,,,2015-05-03 15:00,2015-05-05 15:00,,2015-04-05 13:00,2015-04-07 13:00,2015-04-05 13:00,2015-04-07 13:00,2015-04-05 13:00,2015-04-07 13:00,2015-05-03 15:00,2015-05-05 15:00,,PT_Normal,,,,,+/mnk5tUxE27x5ZrrCQD1A,gEWYNCqTzEOemvkmfR4eVw,,,N,0,0,,,2014-04-13 07:21,2014-04-14 16:04,admin,admin,
3655,143752,6971,40747,7842,0,N,N,N,CP_Phys,TT_Task,DT_FixedDrtn,TK_NotStart,CZA-TK-0526-3350,Welding,8404,242,0,50,0,0,0,50,150,0,150,,,,2015-05-05 15:00,2015-05-11 15:00,,2015-04-07 13:00,2015-04-13 13:00,2015-04-07 13:00,2015-04-13 13:00,2015-04-07 13:00,2015-04-13 13:00,2015-05-05 15:00,2015-05-11 15:00,,PT_Normal,,,,,gLjUadM2w0e0OUs6erFIzA,M2pkcfcBsk2dXAfsTH3Tpw,,,N,0,0,,,2014-04-13 07:21,2014-04-14 16:04,admin,admin,
3656,143753,6971,40747,7842,0,N,N,N,CP_Phys,TT_Task,DT_FixedDrtn,TK_NotStart,CZA-TK-0526-3360,Inspection,8404,242,0,70,0,0,0,70,0,0,0,,,,2015-05-03 15:00,2015-05-11 15:00,,2015-04-05 13:00,2015-04-13 13:00,2015-04-05 13:00,2015-04-13 13:00,2015-04-05 13:00,2015-04-13 13:00,2015-05-03 15:00,2015-05-11 15:00,,PT_Normal,,,,,/LqE63MXykOiDPNtdXh+2Q,oiPqi7blhkCEymJAthkm5Q,,,N,0,0,,,2014-04-13 07:21,2014-04-14 16:04,admin,admin,
3657,143754,6971,40539,7842,0,N,N,N,CP_Phys,TT_Task,DT_FixedDrtn,TK_NotStart,CZA-TK-0526-2860,Welding,8404,242,0,30,0,139.83621,139.83621,30,90,0,90,,,,2015-01-13 11:00,2015-01-17 11:00,,2014-12-16 09:00,2014-12-20 09:00,2014-12-16 09:00,2014-12-20 09:00,2014-12-16 09:00,2014-12-20 09:00,2015-01-13 11:00,2015-01-17 11:00,,PT_Normal,,,,,sg+iD7kXyEScwbTceqavPQ,LGE9rAAdXUmy9RnwoX/gEw,,,N,0,0,,,2014-04-13 07:21,2014-04-14 16:04,admin,admin,
3658,143755,6971,40539,7842,0,N,N,N,CP_Phys,TT_Task,DT_FixedDrtn,TK_NotStart,CZA-TK-0526-2870,Inspection,8404,242,0,40,0,27.967242,27.967242,40,0,0,0,,,,2015-01-12 11:00,2015-01-17 11:00,,2014-12-15 09:00,2014-12-20 09:00,2014-12-15 09:00,2014-12-20 09:00,2014-12-15 09:00,2014-12-20 09:00,2015-01-12 11:00,2015-01-17 11:00,,PT_Normal,,,,,VZT7WBeExEexf6gBJLxhyg,Bpc14HT6sE+YG1/tpKdq9g,,,N,0,0,,,2014-04-13 07:21,2014-04-14 16:04,admin,admin,
3659,143756,6971,40539,7842,0,N,N,N,CP_Phys,TT_Task,DT_FixedDrtn,TK_NotStart,CZA-TK-0526-2850,Laying and Fit-up,8404,242,0,10,0,111.868968,111.868968,10,30,0,30,,,,2015-01-12 11:00,2015-01-13 11:00,,2014-12-15 09:00,2014-12-16 09:00,2014-12-15 09:00,2014-12-16 09:00,2014-12-15 09:00,2014-12-16 09:00,2015-01-12 11:00,2015-01-13 11:00,,PT_Normal,,,,,rjoUoQqWAUGXC7uPe1Y4lg,FRXhnN07U0W9f0ZNaFPCxA,,,N,0,0,,,2014-04-13 07:21,2014-04-14 16:04,admin,admin,
3660,143757,6971,40540,7842,0,N,N,N,CP_Phys,TT_Task,DT_FixedDrtn,TK_NotStart,CZA-TK-0526-3370,Erection and Fit-up,8404,242,0,30,0,0,0,30,90,0,90,,,,2015-05-11 15:00,2015-05-14 15:00,,2015-04-13 13:00,2015-04-16 13:00,2015-04-13 13:00,2015-04-16 13:00,2015-04-13 13:00,2015-04-16 13:00,2015-05-11 15:00,2015-05-14 15:00,,PT_Normal,,,,,GmGJlbBiW0aokPS0NrbPrQ,36qI/FTaPkmyGasF7K66jQ,,,N,0,0,,,2014-04-13 07:21,2014-04-14 16:04,admin,admin,
3661,143758,6971,40540,7842,0,N,N,N,CP_Phys,TT_Task,DT_FixedDrtn,TK_NotStart,CZA-TK-0526-3380,Welding,8404,242,0,100,0,0,0,100,300,0,300,,,,2015-05-14 15:00,2015-05-26 15:00,,2015-04-16 13:00,2015-04-28 13:00,2015-04-16 13:00,2015-04-28 13:00,2015-04-16 13:00,2015-04-28 13:00,2015-05-14 15:00,2015-05-26 15:00,,PT_Normal,,,,,1QO4Ph2aKkCSd4wKSOlu4A,OV7HDKrYH0G24xPMq7Q0jA,,,N,0,0,,,2014-04-13 07:21,2014-04-14 16:04,admin,admin,
3662,143759,6971,40540,7842,0,N,N,N,CP_Phys,TT_Task,DT_FixedDrtn,TK_NotStart,CZA-TK-0526-3390,Inspection,8404,242,0,130,0,0,0,130,0,0,0,,,,2015-05-11 15:00,2015-05-26 15:00,,2015-04-13 13:00,2015-04-28 13:00,2015-04-13 13:00,2015-04-28 13:00,2015-04-13 13:00,2015-04-28 13:00,2015-05-11 15:00,2015-05-26 15:00,,PT_Normal,,,,,USyvQqnem0eR5thsIe2+yg,ia7+Qx1ve0yYMlVsSxUw6w,,,N,0,0,,,2014-04-13 07:21,2014-04-14 16:04,admin,admin,
3663,143760,6971,40541,7842,0,N,N,N,CP_Phys,TT_Task,DT_FixedDrtn,TK_NotStart,CZA-TK-0526-3400,Erection and Fit-up,8404,242,0,28.666667,0,0,0,28.666667,0,0,0,,,,2015-05-11 15:00,2015-05-14 13:40,,2015-04-13 13:00,2015-04-16 11:40,2015-04-13 13:00,2015-04-16 11:40,2015-04-13 13:00,2015-04-16 11:40,2015-05-11 15:00,2015-05-14 13:40,,PT_Normal,,,,,KiJAi37ak0KseJxRT43UBw,ldK9rjPKDUeJvzasCAKEkQ,,,N,0,0,,,2014-04-13 07:21,2014-04-15 07:43,admin,admin,
3664,143761,6971,40541,7842,0,N,N,N,CP_Phys,TT_Task,DT_FixedDrtn,TK_NotStart,CZA-TK-0526-3410,Welding,8404,243.333333,1.333333,100,0,0,0,100,0,0,0,,,,2015-05-14 15:00,2015-05-26 15:00,,2015-04-16 11:40,2015-04-28 11:40,2015-04-16 11:40,2015-04-28 11:40,2015-04-16 11:40,2015-04-28 11:40,2015-05-14 15:00,2015-05-26 15:00,,PT_Normal,,,,,QNlU+DBP/EiS15bEZIRGNg,pRsTNGF45kqrjf86K8AB/w,,,N,0,0,,,2014-04-13 07:21,2014-04-15 07:43,admin,admin,
3665,143762,6971,40541,7842,0,N,N,N,CP_Phys,TT_Task,DT_FixedDrtn,TK_NotStart,CZA-TK-0526-3420,Inspection,8404,242,0,130,0,0,0,130,0,0,0,,,,2015-05-11 15:00,2015-05-26 15:00,,2015-04-13 13:00,2015-04-28 13:00,2015-04-13 13:00,2015-04-28 13:00,2015-04-13 13:00,2015-04-28 13:00,2015-05-11 15:00,2015-05-26 15:00,,PT_Normal,,,,,v7H7kD+b0UaEtDHEgQv2bg,fKBTaLuEM06qhqL6bFXFDg,,,N,0,0,,,2014-04-13 07:21,2014-04-14 16:04,admin,admin,
3666,143763,6971,40542,7842,0,N,N,N,CP_Phys,TT_Task,DT_FixedDrtn,TK_NotStart,CZA-TK-0526-3430,Installation of Primary and Secondary Seal,8404,242,0,30,0,0,0,30,0,0,0,,,,2015-05-26 15:00,2015-05-30 15:00,,2015-04-28 13:00,2015-05-02 13:00,2015-04-28 13:00,2015-05-02 13:00,2015-04-28 13:00,2015-05-02 13:00,2015-05-26 15:00,2015-05-30 15:00,,PT_Normal,,,,,vcqlgnk/s0mW36LKNlvuxA,UJZAmU9BNEijKGA1n7NW4A,,,N,0,0,,,2014-04-13 07:21,2014-04-14 16:04,admin,admin,
3667,143764,6971,40542,7842,0,N,N,N,CP_Phys,TT_Task,DT_FixedDrtn,TK_NotStart,CZA-TK-0526-3440,Inspection,8404,242,242,30,0,0,0,30,0,0,0,,,,2015-05-26 15:00,2015-05-30 15:00,,2015-04-28 13:00,2015-05-02 13:00,2015-04-28 13:00,2015-05-02 13:00,2015-04-28 13:00,2015-05-02 13:00,2015-05-26 15:00,2015-05-30 15:00,,PT_Normal,,,,,qXF0VJnGVkK3Y3QekTsVgA,WUPHU7fTe0uih3MTOVZdGQ,,,N,0,0,,,2014-04-13 07:21,2014-04-14 16:04,admin,admin,
3668,143765,6971,40545,7842,0,N,N,N,CP_Phys,TT_Task,DT_FixedDrtn,TK_NotStart,CZA-TK-0602-2140,Laying and Fit-up,8399,962,0,20,0,192.270685,192.270685,20,60,0,60,,,,2014-08-16 09:00,2014-08-18 09:00,,2014-04-26 07:00,2014-04-27 17:00,2014-04-26 07:00,2014-04-27 17:00,2014-04-26 07:00,2014-04-27 17:00,2014-08-16 09:00,2014-08-18 09:00,,PT_Normal,,,,,ZOxggFZwYkGSg7xFRimzGg,xulqWm3gLUODm8sdYxmygQ,,,N,0,0,,,2014-04-13 07:21,2014-04-14 16:04,admin,admin,
3669,143766,6971,40545,7842,0,N,N,N,CP_Phys,TT_Task,DT_FixedDrtn,TK_NotStart,CZA-TK-0602-2150,Welding,8399,962,0,30,0,240.338356,240.338356,30,90,0,90,,,,2014-08-18 09:00,2014-08-21 09:00,,2014-04-28 07:00,2014-04-30 17:00,2014-04-28 07:00,2014-04-30 17:00,2014-04-28 07:00,2014-04-30 17:00,2014-08-18 09:00,2014-08-21 09:00,,PT_Normal,,,,,XJcG8P6lZkyXyirnoyvkSw,iCdccXgfhkOKA0A8AGKJEA,,,N,0,0,,,2014-04-13 07:21,2014-04-14 16:04,admin,admin,
3670,143767,6971,40545,7842,0,N,N,N,CP_Phys,TT_Task,DT_FixedDrtn,TK_NotStart,CZA-TK-0602-2160,Inspection,8399,962,0,50,0,48.067671,48.067671,50,0,0,0,,,,2014-08-16 09:00,2014-08-21 09:00,,2014-04-26 07:00,2014-04-30 17:00,2014-04-26 07:00,2014-04-30 17:00,2014-04-26 07:00,2014-04-30 17:00,2014-08-16 09:00,2014-08-21 09:00,,PT_Normal,,,,,jKAg7BZWAUiKlFbTS7VHjQ,c5bNOm7VtEah+zZUgEwcjA,,,N,0,0,,,2014-04-13 07:21,2014-04-14 16:04,admin,admin,
3671,143768,6971,40546,7842,0,N,N,N,CP_Phys,TT_Task,DT_FixedDrtn,TK_NotStart,CZA-TK-0602-2170,Laying and Fit-up,8399,962,0,40,0,855.323495,855.323495,40,120,0,120,,,,2014-08-21 09:00,2014-08-26 09:00,,2014-05-01 07:00,2014-05-05 17:00,2014-05-01 07:00,2014-05-05 17:00,2014-05-01 07:00,2014-05-05 17:00,2014-08-21 09:00,2014-08-26 09:00,,PT_Normal,,,,,GSTA4MDFxUW8yiw6EQeupg,BSgw5qbyeEOaOrK64r+R1w,,,N,0,0,,,2014-04-13 07:21,2014-04-14 16:04,admin,admin,
3672,143769,6971,40546,7842,0,N,N,N,CP_Phys,TT_Task,DT_FixedDrtn,TK_NotStart,CZA-TK-0602-2180,Welding,8399,962,0,140,0,1069.154369,1069.154369,140,420,0,420,,,,2014-08-26 09:00,2014-09-11 09:00,,2014-05-06 07:00,2014-05-21 17:00,2014-05-06 07:00,2014-05-21 17:00,2014-05-06 07:00,2014-05-21 17:00,2014-08-26 09:00,2014-09-11 09:00,,PT_Normal,,,,,4uNDj1W+80CI9xbDK1zNHQ,D0ofCkS5YkqPR05wyCk+WQ,,,N,0,0,,,2014-04-13 07:21,2014-04-14 16:04,admin,admin,
3673,143770,6971,40546,7842,0,N,N,N,CP_Phys,TT_Task,DT_FixedDrtn,TK_NotStart,CZA-TK-0602-2190,Inspection,8399,962,0,180,0,213.830874,213.830874,180,0,0,0,,,,2014-08-21 09:00,2014-09-11 09:00,,2014-05-01 07:00,2014-05-21 17:00,2014-05-01 07:00,2014-05-21 17:00,2014-05-01 07:00,2014-05-21 17:00,2014-08-21 09:00,2014-09-11 09:00,,PT_Normal,,,,,t5YOJXF9/US/FHrihE1krw,/WqOa+PkaEu2sIF9ubL1uQ,,,N,0,0,,,2014-04-13 07:21,2014-04-14 16:04,admin,admin,
3674,143771,6971,40547,7842,0,N,N,N,CP_Phys,TT_Task,DT_FixedDrtn,TK_NotStart,CZA-TK-0602-2200,Erection and Fit-up,8399,962,0,20,0,853.835105,853.835105,20,60,0,60,,,,2014-09-11 09:00,2014-09-14 09:00,,2014-05-22 07:00,2014-05-24 17:00,2014-05-22 07:00,2014-05-24 17:00,2014-05-22 07:00,2014-05-24 17:00,2014-09-11 09:00,2014-09-14 09:00,,PT_Normal,,,,,BCvtFtWCQ0qLhOyELxIv8Q,CMp4u5+AV0CppG22wk5jKA,,,N,0,0,,,2014-04-13 07:21,2014-04-14 16:04,admin,admin,
3675,143772,6971,40547,7842,0,N,N,N,CP_Phys,TT_Task,DT_FixedDrtn,TK_NotStart,CZA-TK-0602-2210,Welding,8399,962,0,60,0,1067.293881,1067.293881,60,180,0,180,,,,2014-09-14 09:00,2014-09-21 09:00,,2014-05-25 07:00,2014-05-31 17:00,2014-05-25 07:00,2014-05-31 17:00,2014-05-25 07:00,2014-05-31 17:00,2014-09-14 09:00,2014-09-21 09:00,,PT_Normal,,,,,dlryoRS3h0mPcQqpIuk8Fg,5DZu8c7KO0acRUSjvFy6zA,,,N,0,0,,,2014-04-13 07:21,2014-04-14 16:04,admin,admin,
3676,143773,6971,40547,7842,0,N,N,N,CP_Phys,TT_Task,DT_FixedDrtn,TK_NotStart,CZA-TK-0602-2220,Inspection,8399,962,0,80,0,213.458776,213.458776,80,0,0,0,,,,2014-09-11 09:00,2014-09-21 09:00,,2014-05-22 07:00,2014-05-31 17:00,2014-05-22 07:00,2014-05-31 17:00,2014-05-22 07:00,2014-05-31 17:00,2014-09-11 09:00,2014-09-21 09:00,,PT_Normal,,,,,Jzev1mokvE2zOfUglVP8gw,Wxl+HlTd0kKDQB5tehcgDQ,,,N,0,0,,,2014-04-13 07:21,2014-04-14 16:04,admin,admin,
3677,143774,6971,40548,7842,0,N,N,N,CP_Phys,TT_Task,DT_FixedDrtn,TK_NotStart,CZA-TK-0602-2230,Erection and Fit-up,8399,962,0,20,0,470.984772,470.984772,20,60,0,60,,,,2014-09-21 09:00,2014-09-23 09:00,,2014-06-01 07:00,2014-06-02 17:00,2014-06-01 07:00,2014-06-02 17:00,2014-06-01 07:00,2014-06-02 17:00,2014-09-21 09:00,2014-09-23 09:00,,PT_Normal,,,,,rtTZHNktM0eFlXjMKW+WmQ,bKkEommad0KemkSyNE8ADQ,,,N,0,0,,,2014-04-13 07:21,2014-04-14 16:04,admin,admin,
3678,143775,6971,40548,7842,0,N,N,N,CP_Phys,TT_Task,DT_FixedDrtn,TK_NotStart,CZA-TK-0602-2240,Welding,8399,962,0,60,0,588.730965,588.730965,60,180,0,180,,,,2014-09-23 09:00,2014-09-30 09:00,,2014-06-03 07:00,2014-06-09 17:00,2014-06-03 07:00,2014-06-09 17:00,2014-06-03 07:00,2014-06-09 17:00,2014-09-23 09:00,2014-09-30 09:00,,PT_Normal,,,,,f+REGwoWOUuthly6tillUQ,aS37xsQfMEqXysnix43dQw,,,N,0,0,,,2014-04-13 07:21,2014-04-14 16:04,admin,admin,
3679,143776,6971,40548,7842,0,N,N,N,CP_Phys,TT_Task,DT_FixedDrtn,TK_NotStart,CZA-TK-0602-2250,Inspection,8399,962,0,80,0,117.746193,117.746193,80,0,0,0,,,,2014-09-21 09:00,2014-09-30 09:00,,2014-06-01 07:00,2014-06-09 17:00,2014-06-01 07:00,2014-06-09 17:00,2014-06-01 07:00,2014-06-09 17:00,2014-09-21 09:00,2014-09-30 09:00,,PT_Normal,,,,,STkmtuRNLU6vY5kwDJzbKA,RxOaCCvOOEyjJ+w7LssHOA,,,N,0,0,,,2014-04-13 07:21,2014-04-14 16:04,admin,admin,
3680,143777,6971,40549,7842,0,N,N,N,CP_Phys,TT_Task,DT_FixedDrtn,TK_NotStart,CZA-TK-0602-2260,"Cutting, Installation and Fit-up",8399,962,0,20,0,0,0,20,60,0,60,,,,2014-09-30 09:00,2014-10-02 09:00,,2014-06-10 07:00,2014-06-11 17:00,2014-06-10 07:00,2014-06-11 17:00,2014-06-10 07:00,2014-06-11 17:00,2014-09-30 09:00,2014-10-02 09:00,,PT_Normal,,,,,LjesYsuPbU275jwtL1wLRA,ZJCiZmNAgEe1cEYbzKfw2g,,,N,0,0,,,2014-04-13 07:21,2014-04-14 16:04,admin,admin,
3681,143778,6971,40549,7842,0,N,N,N,CP_Phys,TT_Task,DT_FixedDrtn,TK_NotStart,CZA-TK-0602-2270,Welding,8399,962,0,50,0,0,0,50,150,0,150,,,,2014-10-02 09:00,2014-10-08 09:00,,2014-06-12 07:00,2014-06-17 17:00,2014-06-12 07:00,2014-06-17 17:00,2014-06-12 07:00,2014-06-17 17:00,2014-10-02 09:00,2014-10-08 09:00,,PT_Normal,,,,,QXFWQaQ1GkG9LTOVKEd1zw,j9+OLgoP00GWM6w8WZGn7w,,,N,0,0,,,2014-04-13 07:21,2014-04-14 16:04,admin,admin,
3682,143779,6971,40549,7842,0,N,N,N,CP_Phys,TT_Task,DT_FixedDrtn,TK_NotStart,CZA-TK-0602-2280,Inspection,8399,962,0,70,0,0,0,70,0,0,0,,,,2014-09-30 09:00,2014-10-08 09:00,,2014-06-10 07:00,2014-06-17 17:00,2014-06-10 07:00,2014-06-17 17:00,2014-06-10 07:00,2014-06-17 17:00,2014-09-30 09:00,2014-10-08 09:00,,PT_Normal,,,,,UKYJWmdksEq87uKSo9LXRw,3FAjhArYhE+3dyk76S9JaA,,,N,0,0,,,2014-04-13 07:21,2014-04-14 16:04,admin,admin,
3683,143780,6971,40550,7842,0,N,N,N,CP_Phys,TT_Task,DT_FixedDrtn,TK_NotStart,CZA-TK-0602-2290,Erection and Fit-up,8399,962,0,20,0,0,0,20,60,0,60,,,,2014-10-05 09:00,2014-10-07 09:00,,2014-06-15 07:00,2014-06-16 17:00,2014-06-15 07:00,2014-06-16 17:00,2014-06-15 07:00,2014-06-16 17:00,2014-10-05 09:00,2014-10-07 09:00,,PT_Normal,,,,,G4rNfGy39kyq/hcfdfWgQw,R/2/6LBImE2B60qqAtqeqw,,,N,0,0,,,2014-04-13 07:21,2014-04-14 16:04,admin,admin,
3684,143781,6971,40550,7842,0,N,N,N,CP_Phys,TT_Task,DT_FixedDrtn,TK_NotStart,CZA-TK-0602-2300,Welding,8399,962,0,20,0,0,0,20,60,0,60,,,,2014-10-07 09:00,2014-10-09 09:00,,2014-06-17 07:00,2014-06-18 17:00,2014-06-17 07:00,2014-06-18 17:00,2014-06-17 07:00,2014-06-18 17:00,2014-10-07 09:00,2014-10-09 09:00,,PT_Normal,,,,,MyBaH4zTrE+0OiqVEBUFeQ,hJf660remEG/0y9uunelLw,,,N,0,0,,,2014-04-13 07:21,2014-04-14 16:04,admin,admin,
3685,143782,6971,40550,7842,0,N,N,N,CP_Phys,TT_Task,DT_FixedDrtn,TK_NotStart,CZA-TK-0602-2310,Inspection,8399,962,0,40,0,0,0,40,0,0,0,,,,2014-10-05 09:00,2014-10-09 09:00,,2014-06-15 07:00,2014-06-18 17:00,2014-06-15 07:00,2014-06-18 17:00,2014-06-15 07:00,2014-06-18 17:00,2014-10-05 09:00,2014-10-09 09:00,,PT_Normal,,,,,sE1eRstO/UqKMaOg4/0R+g,epmaE3+AC0iwDyo3M1x3XQ,,,N,0,0,,,2014-04-13 07:21,2014-04-14 16:04,admin,admin,
3686,143783,6971,40551,7842,0,N,N,N,CP_Phys,TT_Task,DT_FixedDrtn,TK_NotStart,CZA-TK-0602-2320,Laying and Fit-up,8399,962,0,30,0,734.436192,734.436192,30,90,0,90,,,,2014-10-09 09:00,2014-10-13 09:00,,2014-06-19 07:00,2014-06-22 17:00,2014-06-19 07:00,2014-06-22 17:00,2014-06-19 07:00,2014-06-22 17:00,2014-10-09 09:00,2014-10-13 09:00,,PT_Normal,,,,,c6SB56GR4kG42jNxHvH7mg,PyyWoyLROkS8GzxUXLMtQw,,,N,0,0,,,2014-04-13 07:21,2014-04-14 16:04,admin,admin,
3687,143784,6971,40551,7842,0,N,N,N,CP_Phys,TT_Task,DT_FixedDrtn,TK_NotStart,CZA-TK-0602-2330,Welding,8399,962,0,90,0,918.045239,918.045239,90,270,0,270,,,,2014-10-13 09:00,2014-10-23 09:00,,2014-06-23 07:00,2014-07-02 17:00,2014-06-23 07:00,2014-07-02 17:00,2014-06-23 07:00,2014-07-02 17:00,2014-10-13 09:00,2014-10-23 09:00,,PT_Normal,,,,,j2icpzgNoUOUSS7L2saGUg,6YW7M0PME0KOpzJepML3rg,,,N,0,0,,,2014-04-13 07:21,2014-04-14 16:04,admin,admin,
3688,143785,6971,40551,7842,0,N,N,N,CP_Phys,TT_Task,DT_FixedDrtn,TK_NotStart,CZA-TK-0602-2340,Inspection,8399,962,0,120,0,183.609048,183.609048,120,0,0,0,,,,2014-10-09 09:00,2014-10-23 09:00,,2014-06-19 07:00,2014-07-02 17:00,2014-06-19 07:00,2014-07-02 17:00,2014-06-19 07:00,2014-07-02 17:00,2014-10-09 09:00,2014-10-23 09:00,,PT_Normal,,,,,fnhMLiBGGUCpsk+0zqzs6A,zNgi8WmM/kGx9e9uV6Oqpw,,,N,0,0,,,2014-04-13 07:21,2014-04-14 16:04,admin,admin,
3689,143786,6971,40552,7842,0,N,N,N,CP_Phys,TT_Task,DT_FixedDrtn,TK_NotStart,CZA-TK-0602-2350,"Laying, Cutting all Holes and Fit-up",8399,962,0,40,0,508.492921,508.492921,40,0,0,0,,,,2014-10-23 09:00,2014-10-28 09:00,,2014-07-03 07:00,2014-07-07 17:00,2014-07-03 07:00,2014-07-07 17:00,2014-07-03 07:00,2014-07-07 17:00,2014-10-23 09:00,2014-10-28 09:00,,PT_Normal,,,,,1dbw3kdNxk6+RBy3UEU4AA,pt1EXkiPNEWl/caxGoNHkA,,,N,0,0,,,2014-04-13 07:21,2014-04-14 16:04,admin,admin,
3690,143787,6971,40552,7842,0,N,N,N,CP_Phys,TT_Task,DT_FixedDrtn,TK_NotStart,CZA-TK-0602-2360,Welding,8399,1002,40,100,0,635.616152,635.616152,100,300,0,300,,,,2014-10-28 09:00,2014-11-09 09:00,,2014-07-03 07:00,2014-07-14 17:00,2014-07-03 07:00,2014-07-14 17:00,2014-07-03 07:00,2014-07-14 17:00,2014-10-28 09:00,2014-11-09 09:00,,PT_Normal,,,,,BUmkPZ1hj0iMyN6CKVmf0g,nlwCCtFDM0eGsZIJNDRVJA,,,N,0,0,,,2014-04-13 07:21,2014-04-14 16:04,admin,admin,
3691,143788,6971,40552,7842,0,N,N,N,CP_Phys,TT_Task,DT_FixedDrtn,TK_NotStart,CZA-TK-0602-2370,Inspection,8399,962,0,140,0,127.12323,127.12323,140,0,0,0,,,,2014-10-23 09:00,2014-11-09 09:00,,2014-07-03 07:00,2014-07-19 17:00,2014-07-03 07:00,2014-07-19 17:00,2014-07-03 07:00,2014-07-19 17:00,2014-10-23 09:00,2014-11-09 09:00,,PT_Normal,,,,,7B8AOoTM00uJFCDNYWeW8w,64qr7GRKkESDXV0S1YHwLw,,,N,0,0,,,2014-04-13 07:21,2014-04-14 16:04,admin,admin,
3692,143789,6971,40553,7842,0,N,N,N,CP_Phys,TT_Task,DT_FixedDrtn,TK_NotStart,CZA-TK-0602-2380,Erection and Fit-up,8399,962,0,30,0,0,0,30,90,0,90,,,,2014-11-09 09:00,2014-11-12 09:00,,2014-07-20 07:00,2014-07-22 17:00,2014-07-20 07:00,2014-07-22 17:00,2014-07-20 07:00,2014-07-22 17:00,2014-11-09 09:00,2014-11-12 09:00,,PT_Normal,,,,,wassx0wBnEWxXvWJg/WwVw,RRrQtsD91U2AkHHYNaV/ow,,,N,0,0,,,2014-04-13 07:21,2014-04-14 16:04,admin,admin,
3693,143790,6971,40553,7842,0,N,N,N,CP_Phys,TT_Task,DT_FixedDrtn,TK_NotStart,CZA-TK-0602-2390,Welding,8399,962,0,80,0,0,0,80,240,0,240,,,,2014-11-12 09:00,2014-11-22 09:00,,2014-07-23 07:00,2014-07-31 17:00,2014-07-23 07:00,2014-07-31 17:00,2014-07-23 07:00,2014-07-31 17:00,2014-11-12 09:00,2014-11-22 09:00,,PT_Normal,,,,,s+jhhFpfu02RM38wqyqeZg,97aMADOrMku57Y8ZCReBVw,,,N,0,0,,,2014-04-13 07:21,2014-04-14 16:04,admin,admin,
3694,143791,6971,40553,7842,0,N,N,N,CP_Phys,TT_Task,DT_FixedDrtn,TK_NotStart,CZA-TK-0602-2400,Inspection,8399,962,0,110,0,0,0,110,0,0,0,,,,2014-11-09 09:00,2014-11-22 09:00,,2014-07-20 07:00,2014-07-31 17:00,2014-07-20 07:00,2014-07-31 17:00,2014-07-20 07:00,2014-07-31 17:00,2014-11-09 09:00,2014-11-22 09:00,,PT_Normal,,,,,6CL26BD36EmXIB7ohOh4Vg,PV2nmga2zEeV7vImxm3Nvg,,,N,0,0,,,2014-04-13 07:21,2014-04-14 16:04,admin,admin,
3695,143792,6971,40554,7842,0,N,N,N,CP_Phys,TT_Task,DT_FixedDrtn,TK_NotStart,CZA-TK-0602-2410,Laying and Fit-up,8399,962,0,20,0,1290.761305,1290.761305,20,60,0,60,,,,2014-11-22 09:00,2014-11-24 09:00,,2014-08-02 07:00,2014-08-03 17:00,2014-08-02 07:00,2014-08-03 17:00,2014-08-02 07:00,2014-08-03 17:00,2014-11-22 09:00,2014-11-24 09:00,,PT_Normal,,,,,4qKqRENE4E+GnEvFuv4MVA,00d1Hthfq0yxwLZpuBKtOw,,,N,0,0,,,2014-04-13 07:21,2014-04-14 16:04,admin,admin,
3696,143793,6971,40554,7842,0,N,N,N,CP_Phys,TT_Task,DT_FixedDrtn,TK_NotStart,CZA-TK-0602-2420,Welding,8399,962,0,60,0,1613.451631,1613.451631,60,180,0,180,,,,2014-11-24 09:00,2014-12-01 09:00,,2014-08-04 07:00,2014-08-10 17:00,2014-08-04 07:00,2014-08-10 17:00,2014-08-04 07:00,2014-08-10 17:00,2014-11-24 09:00,2014-12-01 09:00,,PT_Normal,,,,,0MnIwyNhfkiFcEvUT7QSDQ,I0hFz76PfEq2WiqZKEXapw,,,N,0,0,,,2014-04-13 07:21,2014-04-14 16:04,admin,admin,
3697,143794,6971,40554,7842,0,N,N,N,CP_Phys,TT_Task,DT_FixedDrtn,TK_NotStart,CZA-TK-0602-2430,Inspection,8399,962,0,80,0,322.690326,322.690326,80,0,0,0,,,,2014-11-22 09:00,2014-12-01 09:00,,2014-08-02 07:00,2014-08-10 17:00,2014-08-02 07:00,2014-08-10 17:00,2014-08-02 07:00,2014-08-10 17:00,2014-11-22 09:00,2014-12-01 09:00,,PT_Normal,,,,,WWJ6EfOALU6sSzgbm1skdA,gQR8HeHRVUqn5QrwDxoASQ,,,N,0,0,,,2014-04-13 07:21,2014-04-14 16:04,admin,admin,
3698,143795,6971,40555,7842,0,N,N,N,CP_Phys,TT_Task,DT_FixedDrtn,TK_NotStart,CZA-TK-0602-2440,Laying and Fit-up,8399,962,0,20,0,0,0,20,60,0,60,,,,2014-12-01 09:00,2014-12-03 09:00,,2014-08-11 07:00,2014-08-12 17:00,2014-08-11 07:00,2014-08-12 17:00,2014-08-11 07:00,2014-08-12 17:00,2014-12-01 09:00,2014-12-03 09:00,,PT_Normal,,,,,/t0+Zj38SUG6f6upQiOtdQ,jzTIWMa3Y0y6WfmGwjkqkQ,,,N,0,0,,,2014-04-13 07:21,2014-04-14 16:04,admin,admin,
3699,143796,6971,40555,7842,0,N,N,N,CP_Phys,TT_Task,DT_FixedDrtn,TK_NotStart,CZA-TK-0602-2450,Welding,8399,962,0,70,0,0,0,70,210,0,210,,,,2014-12-03 09:00,2014-12-11 09:00,,2014-08-13 07:00,2014-08-20 17:00,2014-08-13 07:00,2014-08-20 17:00,2014-08-13 07:00,2014-08-20 17:00,2014-12-03 09:00,2014-12-11 09:00,,PT_Normal,,,,,G86w4E8DO0KtDxEB7bXyaQ,hREzCLLzIk2vC4KR7lx/FA,,,N,0,0,,,2014-04-13 07:21,2014-04-14 16:04,admin,admin,
3700,143797,6971,40555,7842,0,N,N,N,CP_Phys,TT_Task,DT_FixedDrtn,TK_NotStart,CZA-TK-0602-2460,Inspection,8399,962,0,90,0,0,0,90,0,0,0,,,,2014-12-01 09:00,2014-12-11 09:00,,2014-08-11 07:00,2014-08-20 17:00,2014-08-11 07:00,2014-08-20 17:00,2014-08-11 07:00,2014-08-20 17:00,2014-12-01 09:00,2014-12-11 09:00,,PT_Normal,,,,,6p3yxCwQSEadHaPlXYBC5w,HmF0j9x7CECfz7NHcRz+0Q,,,N,0,0,,,2014-04-13 07:21,2014-04-14 16:04,admin,admin,
3701,143798,6971,40556,7842,0,N,N,N,CP_Phys,TT_Task,DT_FixedDrtn,TK_NotStart,CZA-TK-0602-2470,"Cutting,lnstallation and Fit-up",8399,962,0,20,0,0,0,20,60,0,60,,,,2014-12-11 09:00,2014-12-14 09:00,,2014-08-21 07:00,2014-08-23 17:00,2014-08-21 07:00,2014-08-23 17:00,2014-08-21 07:00,2014-08-23 17:00,2014-12-11 09:00,2014-12-14 09:00,,PT_Normal,,,,,6ovD7+UvAkiX986V+J7DDg,3a3b8uS5eky2QO55V8ORjw,,,N,0,0,,,2014-04-13 07:21,2014-04-14 16:04,admin,admin,
3702,143799,6971,40556,7842,0,N,N,N,CP_Phys,TT_Task,DT_FixedDrtn,TK_NotStart,CZA-TK-0602-2480,Welding,8399,962,0,50,0,0,0,50,150,0,150,,,,2014-12-14 09:00,2014-12-20 09:00,,2014-08-24 07:00,2014-08-28 17:00,2014-08-24 07:00,2014-08-28 17:00,2014-08-24 07:00,2014-08-28 17:00,2014-12-14 09:00,2014-12-20 09:00,,PT_Normal,,,,,SHaAv5UvVkiBzuWW6LR/xw,T+UsdpAUL0OLPwFLpZN12w,,,N,0,0,,,2014-04-13 07:21,2014-04-14 16:04,admin,admin,
3703,143800,6971,40556,7842,0,N,N,N,CP_Phys,TT_Task,DT_FixedDrtn,TK_NotStart,CZA-TK-0602-2490,Inspection,8399,962,0,70,0,0,0,70,0,0,0,,,,2014-12-11 09:00,2014-12-20 09:00,,2014-08-21 07:00,2014-08-28 17:00,2014-08-21 07:00,2014-08-28 17:00,2014-08-21 07:00,2014-08-28 17:00,2014-12-11 09:00,2014-12-20 09:00,,PT_Normal,,,,,tAIUbDO/0UaTTbg5ftUWfQ,sHc/YHGjUU27VYxq5P2f6Q,,,N,0,0,,,2014-04-13 07:21,2014-04-14 16:04,admin,admin,
3704,143801,6971,40766,7842,0,N,N,N,CP_Phys,TT_Task,DT_FixedDrtn,TK_NotStart,CZA-TK-0602-2500,Erection and Fit-up,8399,962,0,30,0,0,0,30,90,0,90,,,,2014-12-20 09:00,2014-12-23 09:00,,2014-08-30 07:00,2014-09-01 17:00,2014-08-30 07:00,2014-09-01 17:00,2014-08-30 07:00,2014-09-01 17:00,2014-12-20 09:00,2014-12-23 09:00,,PT_Normal,,,,,HeBDtSAK/kGVHrHpmRlAtA,9N/d6g/7kU2Ydru02ck8Yw,,,N,0,0,,,2014-04-13 07:21,2014-04-14 16:04,admin,admin,
3705,143802,6971,40766,7842,0,N,N,N,CP_Phys,TT_Task,DT_FixedDrtn,TK_NotStart,CZA-TK-0602-2510,Welding,8399,962,0,70,0,0,0,70,210,0,210,,,,2014-12-23 09:00,2014-12-31 09:00,,2014-09-02 07:00,2014-09-09 17:00,2014-09-02 07:00,2014-09-09 17:00,2014-09-02 07:00,2014-09-09 17:00,2014-12-23 09:00,2014-12-31 09:00,,PT_Normal,,,,,txjdepCsVk6Io5Jvoi/7YQ,Ybs0mU1gCECDgvrMBx03yQ,,,N,0,0,,,2014-04-13 07:21,2014-04-14 16:04,admin,admin,
3706,143803,6971,40766,7842,0,N,N,N,CP_Phys,TT_Task,DT_FixedDrtn,TK_NotStart,CZA-TK-0602-2520,Inspection,8399,962,0,100,0,0,0,100,0,0,0,,,,2014-12-20 09:00,2014-12-31 09:00,,2014-08-30 07:00,2014-09-09 17:00,2014-08-30 07:00,2014-09-09 17:00,2014-08-30 07:00,2014-09-09 17:00,2014-12-20 09:00,2014-12-31 09:00,,PT_Normal,,,,,NKk8qDPyYkCXe17hAcCxWA,OHfa+HVl90igO8OUXACeeg,,,N,0,0,,,2014-04-13 07:21,2014-04-14 16:04,admin,admin,
3707,143804,6971,40767,7842,0,N,N,N,CP_Phys,TT_Task,DT_FixedDrtn,TK_NotStart,CZA-TK-0602-2530,"Jacking, Erection and Fit-up",8399,962,0,20,0,853.835105,853.835105,20,60,0,60,,,,2014-12-31 09:00,2015-01-03 09:00,,2014-09-10 07:00,2014-09-11 17:00,2014-09-10 07:00,2014-09-11 17:00,2014-09-10 07:00,2014-09-11 17:00,2014-12-31 09:00,2015-01-03 09:00,,PT_Normal,,,,,uoNv0jTSnESbLgn3Zcqckg,6FvRQkPlt0G/mcmtkE2zOQ,,,N,0,0,,,2014-04-13 07:21,2014-04-14 16:04,admin,admin,
3708,143805,6971,40767,7842,0,N,N,N,CP_Phys,TT_Task,DT_FixedDrtn,TK_NotStart,CZA-TK-0602-2540,Welding,8399,962,0,60,0,1067.293881,1067.293881,60,180,0,180,,,,2015-01-03 09:00,2015-01-10 09:00,,2014-09-13 07:00,2014-09-18 17:00,2014-09-13 07:00,2014-09-18 17:00,2014-09-13 07:00,2014-09-18 17:00,2015-01-03 09:00,2015-01-10 09:00,,PT_Normal,,,,,NUs6IBY4NkGcOsIMHj6vUg,tYBbgHj65UGCfMvGR+041w,,,N,0,0,,,2014-04-13 07:21,2014-04-14 16:04,admin,admin,
3709,143806,6971,40767,7842,0,N,N,N,CP_Phys,TT_Task,DT_FixedDrtn,TK_NotStart,CZA-TK-0602-2550,Inspection,8399,962,0,80,0,213.458776,213.458776,80,0,0,0,,,,2014-12-31 09:00,2015-01-10 09:00,,2014-09-10 07:00,2014-09-18 17:00,2014-09-10 07:00,2014-09-18 17:00,2014-09-10 07:00,2014-09-18 17:00,2014-12-31 09:00,2015-01-10 09:00,,PT_Normal,,,,,lQfRy/EKc0u2FGaFhZcE2Q,0XteX6dm4EOeK8fvhcN8+g,,,N,0,0,,,2014-04-13 07:21,2014-04-14 16:04,admin,admin,
3710,143807,6971,40768,7842,0,N,N,N,CP_Phys,TT_Task,DT_FixedDrtn,TK_NotStart,CZA-TK-0602-2560,"Jacking,Erection and Fit-up",8399,962,0,20,0,853.835105,853.835105,20,60,0,60,,,,2015-01-10 09:00,2015-01-12 09:00,,2014-09-20 07:00,2014-09-21 17:00,2014-09-20 07:00,2014-09-21 17:00,2014-09-20 07:00,2014-09-21 17:00,2015-01-10 09:00,2015-01-12 09:00,,PT_Normal,,,,,vG99pBreRUCw6BM7nDvrWw,755/ISNeNU6GmfwEyxCs3g,,,N,0,0,,,2014-04-13 07:21,2014-04-14 16:04,admin,admin,
3711,143808,6971,40768,7842,0,N,N,N,CP_Phys,TT_Task,DT_FixedDrtn,TK_NotStart,CZA-TK-0602-2570,Welding,8399,962,0,60,0,1067.293881,1067.293881,60,180,0,180,,,,2015-01-12 09:00,2015-01-19 09:00,,2014-09-22 07:00,2014-09-28 17:00,2014-09-22 07:00,2014-09-28 17:00,2014-09-22 07:00,2014-09-28 17:00,2015-01-12 09:00,2015-01-19 09:00,,PT_Normal,,,,,N5tAWHEN6UaJyzVwCkykeA,PQWGBoM5jECW7V/88alebA,,,N,0,0,,,2014-04-13 07:21,2014-04-14 16:04,admin,admin,
3712,143809,6971,40768,7842,0,N,N,N,CP_Phys,TT_Task,DT_FixedDrtn,TK_NotStart,CZA-TK-0602-2580,Inspection,8399,962,0,80,0,213.458776,213.458776,80,0,0,0,,,,2015-01-10 09:00,2015-01-19 09:00,,2014-09-20 07:00,2014-09-28 17:00,2014-09-20 07:00,2014-09-28 17:00,2014-09-20 07:00,2014-09-28 17:00,2015-01-10 09:00,2015-01-19 09:00,,PT_Normal,,,,,ALHfG53h3kOQCiipsAGNtg,jWf1N0q9ZkikmCVy6i6Rdw,,,N,0,0,,,2014-04-13 07:21,2014-04-14 16:04,admin,admin,
3713,143810,6971,40560,7842,0,N,N,N,CP_Phys,TT_Task,DT_FixedDrtn,TK_NotStart,CZA-TK-0602-2590,"Jacking,Erection and Fit-up",8399,962,0,20,0,1174.104482,1174.104482,20,60,0,60,,,,2015-01-19 09:00,2015-01-21 09:00,,2014-09-29 07:00,2014-09-30 17:00,2014-09-29 07:00,2014-09-30 17:00,2014-09-29 07:00,2014-09-30 17:00,2015-01-19 09:00,2015-01-21 09:00,,PT_Normal,,,,,B9jil7Y/bkWZNQV9gOd9Rg,EA5p885XM0mbyZBqDTLjPw,,,N,0,0,,,2014-04-13 07:21,2014-04-14 16:04,admin,admin,
3714,143811,6971,40560,7842,0,N,N,N,CP_Phys,TT_Task,DT_FixedDrtn,TK_NotStart,CZA-TK-0602-2600,Welding,8399,962,0,60,0,1467.630602,1467.630602,60,180,0,180,,,,2015-01-21 09:00,2015-01-28 09:00,,2014-10-01 07:00,2014-10-07 17:00,2014-10-01 07:00,2014-10-07 17:00,2014-10-01 07:00,2014-10-07 17:00,2015-01-21 09:00,2015-01-28 09:00,,PT_Normal,,,,,3xR/Wo1/REqq/dP7CUCOwA,n7YT2ISePUKAfGmPL0dPEg,,,N,0,0,,,2014-04-13 07:21,2014-04-14 16:04,admin,admin,
3715,143812,6971,40560,7842,0,N,N,N,CP_Phys,TT_Task,DT_FixedDrtn,TK_NotStart,CZA-TK-0602-2610,Inspection,8399,962,0,80,0,293.52612,293.52612,80,0,0,0,,,,2015-01-19 09:00,2015-01-28 09:00,,2014-09-29 07:00,2014-10-07 17:00,2014-09-29 07:00,2014-10-07 17:00,2014-09-29 07:00,2014-10-07 17:00,2015-01-19 09:00,2015-01-28 09:00,,PT_Normal,,,,,M0YYX4Yo+EqPqxbrcNpGMg,d9tKvQvh7UW+qu050Vuu3g,,,N,0,0,,,2014-04-13 07:21,2014-04-14 16:04,admin,admin,
3716,143813,6971,40561,7842,0,N,N,N,CP_Phys,TT_Task,DT_FixedDrtn,TK_NotStart,CZA-TK-0602-2620,"Jacking, Erection and Fit-up",8399,962,0,20,0,1494.412339,1494.412339,20,60,0,60,,,,2015-01-28 09:00,2015-01-31 09:00,,2014-10-08 07:00,2014-10-09 17:00,2014-10-08 07:00,2014-10-09 17:00,2014-10-08 07:00,2014-10-09 17:00,2015-01-28 09:00,2015-01-31 09:00,,PT_Normal,,,,,Ga9HaRMvoECE485wNf5pgQ,pDIhgopLIkCwD0749IHjmA,,,N,0,0,,,2014-04-13 07:21,2014-04-14 16:04,admin,admin,
3717,143814,6971,40561,7842,0,N,N,N,CP_Phys,TT_Task,DT_FixedDrtn,TK_NotStart,CZA-TK-0602-2630,Welding,8399,962,0,60,0,1868.015424,1868.015424,60,180,0,180,,,,2015-01-31 09:00,2015-02-07 09:00,,2014-10-11 07:00,2014-10-16 17:00,2014-10-11 07:00,2014-10-16 17:00,2014-10-11 07:00,2014-10-16 17:00,2015-01-31 09:00,2015-02-07 09:00,,PT_Normal,,,,,7pIt3ZgHDEqotvxqINjzZA,+yuvZMjcw0OLROjNj/+MnA,,,N,0,0,,,2014-04-13 07:21,2014-04-14 16:04,admin,admin,
3718,143815,6971,40561,7842,0,N,N,N,CP_Phys,TT_Task,DT_FixedDrtn,TK_NotStart,CZA-TK-0602-2640,Inspection,8399,962,0,80,0,373.603085,373.603085,80,0,0,0,,,,2015-01-28 09:00,2015-02-07 09:00,,2014-10-08 07:00,2014-10-16 17:00,2014-10-08 07:00,2014-10-16 17:00,2014-10-08 07:00,2014-10-16 17:00,2015-01-28 09:00,2015-02-07 09:00,,PT_Normal,,,,,DqOV991etEuoGEwqd7qZAg,nKy8fRjBNUe7JBWKKUcnWQ,,,N,0,0,,,2014-04-13 07:21,2014-04-14 16:04,admin,admin,
3719,143816,6971,40562,7842,0,N,N,N,CP_Phys,TT_Task,DT_FixedDrtn,TK_NotStart,CZA-TK-0602-2650,"Jacking, Erection and Fit-up",8399,962,0,20,0,1707.979497,1707.979497,20,60,0,60,,,,2015-02-07 09:00,2015-02-09 09:00,,2014-10-18 07:00,2014-10-19 17:00,2014-10-18 07:00,2014-10-19 17:00,2014-10-18 07:00,2014-10-19 17:00,2015-02-07 09:00,2015-02-09 09:00,,PT_Normal,,,,,2imjCf7aT0yj26YvKFiz4w,3ts+4CVJX0CMVGnW+XSNww,,,N,0,0,,,2014-04-13 07:21,2014-04-14 16:04,admin,admin,
3720,143817,6971,40562,7842,0,N,N,N,CP_Phys,TT_Task,DT_FixedDrtn,TK_NotStart,CZA-TK-0602-2660,Welding,8399,962,0,60,0,2134.974372,2134.974372,60,180,0,180,,,,2015-02-09 09:00,2015-02-16 09:00,,2014-10-20 07:00,2014-10-26 17:00,2014-10-20 07:00,2014-10-26 17:00,2014-10-20 07:00,2014-10-26 17:00,2015-02-09 09:00,2015-02-16 09:00,,PT_Normal,,,,,4zwoQ2HG8kiS+N+ZIt5QOg,tZANn7lZiUSNQO2LjpIFgA,,,N,0,0,,,2014-04-13 07:21,2014-04-14 16:04,admin,admin,
3721,143818,6971,40562,7842,0,N,N,N,CP_Phys,TT_Task,DT_FixedDrtn,TK_NotStart,CZA-TK-0602-2670,Inspection,8399,962,0,80,0,426.994874,426.994874,80,0,0,0,,,,2015-02-07 09:00,2015-02-16 09:00,,2014-10-18 07:00,2014-10-26 17:00,2014-10-18 07:00,2014-10-26 17:00,2014-10-18 07:00,2014-10-26 17:00,2015-02-07 09:00,2015-02-16 09:00,,PT_Normal,,,,,LhmapFRrRUOt5urqPwlkPA,UxHOdJmZ9EGU1EXStwHmDg,,,N,0,0,,,2014-04-13 07:21,2014-04-14 16:04,admin,admin,
3722,143819,6971,40563,7842,0,N,N,N,CP_Phys,TT_Task,DT_FixedDrtn,TK_NotStart,CZA-TK-0602-2680,"Jacking, Erection and Fit-up",8399,962,0,20,0,2028.357618,2028.357618,20,60,0,60,,,,2015-02-16 09:00,2015-02-18 09:00,,2014-10-27 07:00,2014-10-28 17:00,2014-10-27 07:00,2014-10-28 17:00,2014-10-27 07:00,2014-10-28 17:00,2015-02-16 09:00,2015-02-18 09:00,,PT_Normal,,,,,trTgP0WQJkqrk9TNnri0Bw,XzIE5vr9L0+AIvNXNFWGTQ,,,N,0,0,,,2014-04-13 07:21,2014-04-14 16:04,admin,admin,
3723,143820,6971,40563,7842,0,N,N,N,CP_Phys,TT_Task,DT_FixedDrtn,TK_NotStart,CZA-TK-0602-2690,Welding,8399,962,0,60,0,2535.447022,2535.447022,60,180,0,180,,,,2015-02-18 09:00,2015-02-25 09:00,,2014-10-29 07:00,2014-11-04 17:00,2014-10-29 07:00,2014-11-04 17:00,2014-10-29 07:00,2014-11-04 17:00,2015-02-18 09:00,2015-02-25 09:00,,PT_Normal,,,,,9Dfk4fzeekiUkrY5wCoajQ,N+PyHWfk/EqO2ZopU+KlQA,,,N,0,0,,,2014-04-13 07:21,2014-04-14 16:04,admin,admin,
3724,143821,6971,40563,7842,0,N,N,N,CP_Phys,TT_Task,DT_FixedDrtn,TK_NotStart,CZA-TK-0602-2700,Inspection,8399,962,0,80,0,507.089404,507.089404,80,0,0,0,,,,2015-02-16 09:00,2015-02-25 09:00,,2014-10-27 07:00,2014-11-04 17:00,2014-10-27 07:00,2014-11-04 17:00,2014-10-27 07:00,2014-11-04 17:00,2015-02-16 09:00,2015-02-25 09:00,,PT_Normal,,,,,mBhHY2enSUyBCxVlQNCBtg,8uHLhQYq5UC6s1FJnCNeEw,,,N,0,0,,,2014-04-13 07:21,2014-04-14 16:04,admin,admin,
3725,143822,6971,40564,7842,0,N,N,N,CP_Phys,TT_Task,DT_FixedDrtn,TK_NotStart,CZA-TK-0602-2710,"Jacking, Erection and Fit-up",8399,962,0,20,0,1044.192013,1044.192013,20,60,0,60,,,,2015-02-25 09:00,2015-02-28 09:00,,2014-11-05 07:00,2014-11-06 17:00,2014-11-05 07:00,2014-11-06 17:00,2014-11-05 07:00,2014-11-06 17:00,2015-02-25 09:00,2015-02-28 09:00,,PT_Normal,,,,,uGen1Hj+bUemPZ+nMLHSZg,X8HzS5whCUKsuUOQKJp9Yg,,,N,0,0,,,2014-04-13 07:21,2014-04-14 16:04,admin,admin,
3726,143823,6971,40564,7842,0,N,N,N,CP_Phys,TT_Task,DT_FixedDrtn,TK_NotStart,CZA-TK-0602-2720,Welding,8399,962,0,60,0,1305.240016,1305.240016,60,180,0,180,,,,2015-02-28 09:00,2015-03-07 09:00,,2014-11-08 07:00,2014-11-13 17:00,2014-11-08 07:00,2014-11-13 17:00,2014-11-08 07:00,2014-11-13 17:00,2015-02-28 09:00,2015-03-07 09:00,,PT_Normal,,,,,DpmXwr+OpkSxzjr1MLhNbw,iVsHcpSryEWgsvYyZYCA8w,,,N,0,0,,,2014-04-13 07:21,2014-04-14 16:04,admin,admin,
3727,143824,6971,40564,7842,0,N,N,N,CP_Phys,TT_Task,DT_FixedDrtn,TK_NotStart,CZA-TK-0602-2730,Inspection,8399,962,0,80,0,261.048003,261.048003,80,0,0,0,,,,2015-02-25 09:00,2015-03-07 09:00,,2014-11-05 07:00,2014-11-13 17:00,2014-11-05 07:00,2014-11-13 17:00,2014-11-05 07:00,2014-11-13 17:00,2015-02-25 09:00,2015-03-07 09:00,,PT_Normal,,,,,3n+F4CHAAkerPvEWtdXKCw,5xkPrJuk2k6zoNViZ85urw,,,N,0,0,,,2014-04-13 07:21,2014-04-14 16:04,admin,admin,
3728,143825,6971,40565,7842,0,N,N,N,CP_Phys,TT_Task,DT_FixedDrtn,TK_NotStart,CZA-TK-0602-2740,"Lay-out, Cutting, and Fit-up",8399,962,0,20,0,52.598377,52.598377,20,60,0,60,,,,2015-03-07 09:00,2015-03-09 09:00,,2014-11-15 07:00,2014-11-16 17:00,2014-11-15 07:00,2014-11-16 17:00,2014-11-15 07:00,2014-11-16 17:00,2015-03-07 09:00,2015-03-09 09:00,,PT_Normal,,,,,xJmScqzxsE25icOzLm1h2w,sg9+pKYIv0aGFpBDNidHYQ,,,N,0,0,,,2014-04-13 07:21,2014-04-14 16:04,admin,admin,
3729,143826,6971,40565,7842,0,N,N,N,CP_Phys,TT_Task,DT_FixedDrtn,TK_NotStart,CZA-TK-0602-2750,Welding,8399,962,0,50,0,65.747972,65.747972,50,150,0,150,,,,2015-03-09 09:00,2015-03-15 09:00,,2014-11-17 07:00,2014-11-22 17:00,2014-11-17 07:00,2014-11-22 17:00,2014-11-17 07:00,2014-11-22 17:00,2015-03-09 09:00,2015-03-15 09:00,,PT_Normal,,,,,pxMDee3qeEi0ppyb9BF5wA,xAabrKkJu0C9G9n+KudjkQ,,,N,0,0,,,2014-04-13 07:21,2014-04-14 16:04,admin,admin,
3730,143827,6971,40565,7842,0,N,N,N,CP_Phys,TT_Task,DT_FixedDrtn,TK_NotStart,CZA-TK-0602-2760,Inspection,8399,962,0,70,0,13.149594,13.149594,70,0,0,0,,,,2015-03-07 09:00,2015-03-15 09:00,,2014-11-15 07:00,2014-11-22 17:00,2014-11-15 07:00,2014-11-22 17:00,2014-11-15 07:00,2014-11-22 17:00,2015-03-07 09:00,2015-03-15 09:00,,PT_Normal,,,,,uk5sCMzrz0mUMb/Wrxanfw,7rlReQqYK0K5OC1Gh1FVmw,,,N,0,0,,,2014-04-13 07:21,2014-04-14 16:04,admin,admin,
3731,143828,6971,40566,7842,0,N,N,N,CP_Phys,TT_Task,DT_FixedDrtn,TK_NotStart,CZA-TK-0602-2770,Erection and Fit-up,8399,962,0,20,0,0,0,20,0,0,0,,,,2015-03-08 15:00,2015-03-10 15:00,,2014-11-16 13:00,2014-11-18 13:00,2014-11-16 13:00,2014-11-18 13:00,2014-11-16 13:00,2014-11-18 13:00,2015-03-08 15:00,2015-03-10 15:00,,PT_Normal,,,,,/g2aR4Uy6UOYgxzAn6Homg,8Rjv91Q7QU6J6bEu+WVfsQ,,,N,0,0,,,2014-04-13 07:21,2014-04-14 16:04,admin,admin,
3732,143829,6971,40566,7842,0,N,N,N,CP_Phys,TT_Task,DT_FixedDrtn,TK_NotStart,CZA-TK-0602-2780,Welding,8399,962,0,60,0,0,0,60,180,0,180,,,,2015-03-10 15:00,2015-03-17 15:00,,2014-11-18 13:00,2014-11-25 13:00,2014-11-18 13:00,2014-11-25 13:00,2014-11-18 13:00,2014-11-25 13:00,2015-03-10 15:00,2015-03-17 15:00,,PT_Normal,,,,,p3NpbiyKGkWz/an/XQ36mw,Btc1MLPe9kaJjr1cc91Z2Q,,,N,0,0,,,2014-04-13 07:21,2014-04-14 16:04,admin,admin,
3733,143830,6971,40566,7842,0,N,N,N,CP_Phys,TT_Task,DT_FixedDrtn,TK_NotStart,CZA-TK-0602-2790,Inspection,8399,962,0,80,0,0,0,80,0,0,0,,,,2015-03-08 15:00,2015-03-17 15:00,,2014-11-16 13:00,2014-11-25 13:00,2014-11-16 13:00,2014-11-25 13:00,2014-11-16 13:00,2014-11-25 13:00,2015-03-08 15:00,2015-03-17 15:00,,PT_Normal,,,,,BQBaguZ+Z0yiSyRcxxao4g,kb5MSYzf7UOZvzEG/9rFvg,,,N,0,0,,,2014-04-13 07:21,2014-04-14 16:04,admin,admin,
3734,143831,6971,40567,7842,0,N,N,N,CP_Phys,TT_Task,DT_FixedDrtn,TK_NotStart,CZA-TK-0602-2800,Installation of Primary and Secondary Seal,8399,962,0,60,0,0,0,60,0,0,0,,,,2015-03-17 15:00,2015-03-24 15:00,,2014-11-25 13:00,2014-12-02 13:00,2014-11-25 13:00,2014-12-02 13:00,2014-11-25 13:00,2014-12-02 13:00,2015-03-17 15:00,2015-03-24 15:00,,PT_Normal,,,,,2A4gvYrpVkWiL0sJ+1WDmg,kotpBJBbWUqm7yJct2McrQ,,,N,0,0,,,2014-04-13 07:21,2014-04-14 16:04,admin,admin,
3735,143832,6971,40567,7842,0,N,N,N,CP_Phys,TT_Task,DT_FixedDrtn,TK_NotStart,CZA-TK-0602-2810,Inspection,8399,962,0,10,0,0,0,10,0,0,0,,,,2015-03-24 15:00,2015-03-25 15:00,,2014-12-02 13:00,2014-12-03 13:00,2014-12-02 13:00,2014-12-03 13:00,2014-12-02 13:00,2014-12-03 13:00,2015-03-24 15:00,2015-03-25 15:00,,PT_Normal,,,,,V/bDWurxgEmOeFep/LjpSg,MvIRkCDu70G5mY9IubIp0g,,,N,0,0,,,2014-04-13 07:21,2014-04-14 16:04,admin,admin,
3736,143833,6971,40130,7842,0,N,N,N,CP_Phys,TT_Task,DT_FixedDrtn,TK_NotStart,CZA-TK-0602-2840,Tank Calibration,8399,992,0,50,0,2592.830595,2592.830595,50,0,0,0,,,,2015-06-20 15:00,2015-06-25 15:00,,2015-02-24 13:00,2015-03-02 13:00,2015-02-24 13:00,2015-03-02 13:00,2015-02-24 13:00,2015-03-02 13:00,2015-06-20 15:00,2015-06-25 15:00,,PT_Normal,,,,,qYoHXbsXyUyyo8+85y0TtQ,MkFBSKyF80uDN5b+veETvA,,,N,0,0,,,2014-04-13 07:21,2014-04-14 16:04,admin,admin,
3737,143834,6971,40130,7842,0,N,N,N,CP_Phys,TT_Task,DT_FixedDrtn,TK_NotStart,CZA-TK-0602-2850,Tank Handover,8399,992,992,20,0,2592.830595,2592.830595,20,0,0,0,,,,2015-06-25 15:00,2015-06-28 15:00,,2015-03-02 13:00,2015-03-04 13:00,2015-03-02 13:00,2015-03-04 13:00,2015-03-02 13:00,2015-03-04 13:00,2015-06-25 15:00,2015-06-28 15:00,,PT_Normal,,,,,bXr5Lm7+3UCxvwc1ygBCQw,03htNp3qu0iP3NM6zhgVVA,,,N,0,0,,,2014-04-13 07:21,2014-04-14 16:04,admin,admin,
3738,143835,6971,40042,7842,0,N,N,N,CP_Phys,TT_Task,DT_FixedDrtn,TK_NotStart,CZA-TK-0602-1920,Cutting of Annular Plates,8504,2906,0,50,0,439.2,439.2,50,0,0,0,,,,2014-12-30 13:00,2015-01-05 13:00,,2014-01-26 07:00,2014-01-30 17:00,2014-01-26 07:00,2014-01-30 17:00,2014-01-26 07:00,2014-01-30 17:00,2014-12-30 13:00,2015-01-05 13:00,,PT_Normal,,,,,hE0Pev7FiUqX4b5Fh4g2MA,eU6SvoBFIEeFIhIc7VzEPA,,,N,0,0,,,2014-04-13 07:21,2014-04-14 17:03,admin,admin,
3739,143836,6971,40042,7842,0,N,N,N,CP_Phys,TT_Task,DT_FixedDrtn,TK_NotStart,CZA-TK-0602-1930,Cutting of Bottom Plates,8504,2906,0,50,0,1953.798,1953.798,50,0,0,0,,,,2014-12-30 13:00,2015-01-05 13:00,,2014-01-26 07:00,2014-01-30 17:00,2014-01-26 07:00,2014-01-30 17:00,2014-01-26 07:00,2014-01-30 17:00,2014-12-30 13:00,2015-01-05 13:00,,PT_Normal,,,,,i7GGz8oWDE+xgsAQePdBVg,EkDZ/rvgsEybSrJtTe+1+Q,,,N,0,0,,,2014-04-13 07:21,2014-04-14 17:03,admin,admin,
3740,143837,6971,40042,7842,0,N,N,N,CP_Phys,TT_Task,DT_FixedDrtn,TK_NotStart,CZA-TK-0602-1940,"Cutting,Bevelling & Rolling Shell No.8",8504,2906,0,20,0,1950.3981,1950.3981,20,0,0,0,,,,2015-01-01 09:00,2015-01-04 09:00,,2014-01-27 13:00,2014-01-29 13:00,2014-01-27 13:00,2014-01-29 13:00,2014-01-27 13:00,2014-01-29 13:00,2015-01-01 09:00,2015-01-04 09:00,,PT_Normal,,,,,CU0aoTyxJUinis7Eh7vFJg,QwX2sC86UE6DLqj4iq0JWg,,,N,0,0,,,2014-04-13 07:21,2014-04-14 17:03,admin,admin,
3741,143838,6971,40042,7842,0,N,N,N,CP_Phys,TT_Task,DT_FixedDrtn,TK_NotStart,CZA-TK-0602-1950,"Cutting,Bevelling & Rolling Shell No.9",8504,2906,0,20,0,1075.8609,1075.8609,20,0,0,0,,,,2015-01-03 07:00,2015-01-04 17:00,,2014-01-28 11:00,2014-01-30 11:00,2014-01-28 11:00,2014-01-30 11:00,2014-01-28 11:00,2014-01-30 11:00,2015-01-03 07:00,2015-01-04 17:00,,PT_Normal,,,,,jLKA9BX6HEeHoUxwlV9KOQ,Tfw2xsFYbUGzPcj/AvoFaQ,,,N,0,0,,,2014-04-13 07:21,2014-04-14 17:03,admin,admin,
3742,143839,6971,40042,7842,0,N,N,N,CP_Phys,TT_Task,DT_FixedDrtn,TK_NotStart,CZA-TK-0602-1960,Cutting of Floating Deck,8504,2906,0,70,0,1677.6576,1677.6576,70,0,0,0,,,,2015-01-05 07:00,2015-01-12 17:00,,2014-01-30 11:00,2014-02-08 11:00,2014-01-30 11:00,2014-02-08 11:00,2014-01-30 11:00,2014-02-08 11:00,2015-01-05 07:00,2015-01-12 17:00,,PT_Normal,,,,,nrKsHNmVN0Ot1jTu8XVq2Q,D4kzxM2lc0m8jL4EN/2+IA,,,N,0,0,,,2014-04-13 07:21,2014-04-14 17:03,admin,admin,
3743,143840,6971,40042,7842,0,N,N,N,CP_Phys,TT_Task,DT_FixedDrtn,TK_NotStart,CZA-TK-0602-1970,Cutting of Pontoon,8504,2906,0,140,0,1161.54,1161.54,140,0,0,0,,,,2015-01-05 15:00,2015-01-21 15:00,,2014-02-01 09:00,2014-02-17 09:00,2014-02-01 09:00,2014-02-17 09:00,2014-02-01 09:00,2014-02-17 09:00,2015-01-05 15:00,2015-01-21 15:00,,PT_Normal,,,,,d4BR1TEz70aNUVx6oe9CJA,3sYIpk0ZPUuOJ8E2RyOnqA,,,N,0,0,,,2014-04-13 07:21,2014-04-14 17:03,admin,admin,
3744,143841,6971,40042,7842,0,N,N,N,CP_Phys,TT_Task,DT_FixedDrtn,TK_NotStart,CZA-TK-0602-1980,Cutting of Floating Legs and Manhole,8504,2906,0,70,0,0,0,70,0,0,0,,,,2015-01-21 15:00,2015-01-29 15:00,,2014-02-17 09:00,2014-02-25 09:00,2014-02-17 09:00,2014-02-25 09:00,2014-02-17 09:00,2014-02-25 09:00,2015-01-21 15:00,2015-01-29 15:00,,PT_Normal,,,,,kVZpQJ9S0USHm0OBR3TKpg,5VxLExfMyUSl3oCIVPDsTw,,,N,0,0,,,2014-04-13 07:21,2014-04-14 17:03,admin,admin,
3745,143842,6971,40042,7842,0,N,N,N,CP_Phys,TT_Task,DT_FixedDrtn,TK_NotStart,CZA-TK-0602-1990,"Cutting, Fit-up and Welding of Roof Structure",8504,2906,0,70,0,2948.4597,2948.4597,70,0,0,0,,,,2015-01-29 15:00,2015-02-07 15:00,,2014-02-25 09:00,2014-03-05 09:00,2014-02-25 09:00,2014-03-05 09:00,2014-02-25 09:00,2014-03-05 09:00,2015-01-29 15:00,2015-02-07 15:00,,PT_Normal,,,,,f1qkixHBwk6OaKJqq7TQ7A,+XruZRxqwESu8Rcoh8/ATg,,,N,0,0,,,2014-04-13 07:21,2014-04-14 17:03,admin,admin,
3746,143843,6971,40042,7842,0,N,N,N,CP_Phys,TT_Task,DT_FixedDrtn,TK_NotStart,CZA-TK-0602-2000,Cutting of Compression Ring & Stairways,8504,2906,0,20,0,0,0,20,0,0,0,,,,2015-02-01 11:00,2015-02-03 11:00,,2014-02-26 15:00,2014-03-01 15:00,2014-02-26 15:00,2014-03-01 15:00,2014-02-26 15:00,2014-03-01 15:00,2015-02-01 11:00,2015-02-03 11:00,,PT_Normal,,,,,HKEgrICntkyDEUiIut/9LA,37IlMujeOUyHqdIycqqPZg,,,N,0,0,,,2014-04-13 07:21,2014-04-15 07:43,admin,admin,
3747,143844,6971,40042,7842,0,N,N,N,CP_Phys,TT_Task,DT_FixedDrtn,TK_NotStart,CZA-TK-0602-2010,Cutting of Roof Plates,8504,2906,0,40,0,0,0,40,0,0,0,,,,2015-02-01 11:00,2015-02-05 11:00,,2014-02-26 15:00,2014-03-03 15:00,2014-02-26 15:00,2014-03-03 15:00,2014-02-26 15:00,2014-03-03 15:00,2015-02-01 11:00,2015-02-05 11:00,,PT_Normal,,,,,+0ZxPUl8Q0uVaSw0D98LDg,k7zAF1nWW0+HVj9oR7mm6A,,,N,0,0,,,2014-04-13 07:21,2014-04-14 17:03,admin,admin,
3748,143845,6971,40042,7842,0,N,N,N,CP_Phys,TT_Task,DT_FixedDrtn,TK_NotStart,CZA-TK-0602-2020,"Cutting, Fit-up and Welding of Roof Nozzles, Manholes and Other  Appurtanances",8504,2906,0,60,0,0,0,60,0,0,0,,,,2015-02-03 15:00,2015-02-10 15:00,,2014-03-02 09:00,2014-03-09 09:00,2014-03-02 09:00,2014-03-09 09:00,2014-03-02 09:00,2014-03-09 09:00,2015-02-03 15:00,2015-02-10 15:00,,PT_Normal,,,,,5mkM8E9H3kmboY1AGenYzQ,UtSA2/zBRU2br6O+C9kVhA,,,N,0,0,,,2014-04-13 07:21,2014-04-14 17:03,admin,admin,
3749,143846,6971,40042,7842,0,N,N,N,CP_Phys,TT_Task,DT_FixedDrtn,TK_NotStart,CZA-TK-0602-2030,"Cutting, Fit-up & Welding of Roof Platform, Gratings and Handrails",8504,2906,0,140,0,0,0,140,0,0,0,,,,2015-02-03 15:00,2015-02-19 15:00,,2014-03-02 09:00,2014-03-18 09:00,2014-03-02 09:00,2014-03-18 09:00,2014-03-02 09:00,2014-03-18 09:00,2015-02-03 15:00,2015-02-19 15:00,,PT_Normal,,,,,rtVPignSEE29mdYSxS5hyA,cBZkmOhJbUCeGGaryQRBqA,,,N,0,0,,,2014-04-13 07:21,2014-04-14 17:03,admin,admin,
3750,143847,6971,40042,7842,0,N,N,N,CP_Phys,TT_Task,DT_FixedDrtn,TK_NotStart,CZA-TK-0602-2040,"Cutting, Bevelling & Rolling of Shell No.7",8504,2906,0,20,0,1950.3981,1950.3981,20,0,0,0,,,,2015-02-19 15:00,2015-02-22 15:00,,2014-03-18 09:00,2014-03-20 09:00,2014-03-18 09:00,2014-03-20 09:00,2014-03-18 09:00,2014-03-20 09:00,2015-02-19 15:00,2015-02-22 15:00,,PT_Normal,,,,,/FOqBX1KiEuyUBSj8qQ9DA,dnMoGgqxIEeSkmD75Nzx6g,,,N,0,0,,,2014-04-13 07:21,2014-04-14 17:03,admin,admin,
3751,143848,6971,40042,7842,0,N,N,N,CP_Phys,TT_Task,DT_FixedDrtn,TK_NotStart,CZA-TK-0602-2050,"Cutting, Bevelling & Rolling of Shell No.6",8504,2906,0,20,0,1950.3981,1950.3981,20,0,0,0,,,,2015-02-19 15:00,2015-02-22 15:00,,2014-03-18 09:00,2014-03-20 09:00,2014-03-18 09:00,2014-03-20 09:00,2014-03-18 09:00,2014-03-20 09:00,2015-02-19 15:00,2015-02-22 15:00,,PT_Normal,,,,,f9m9SWHAYEm3NCpcXOQf5A,IBMEnSCVWkmnMA/cEesOEw,,,N,0,0,,,2014-04-13 07:21,2014-04-14 17:03,admin,admin,
3752,143849,6971,40042,7842,0,N,N,N,CP_Phys,TT_Task,DT_FixedDrtn,TK_NotStart,CZA-TK-0602-2060,"Cutting, Bevelling & Rolling of Shell No.5",8504,2906,0,20,0,2681.9829,2681.9829,20,0,0,0,,,,2015-02-22 15:00,2015-02-24 15:00,,2014-03-20 09:00,2014-03-23 09:00,2014-03-20 09:00,2014-03-23 09:00,2014-03-20 09:00,2014-03-23 09:00,2015-02-22 15:00,2015-02-24 15:00,,PT_Normal,,,,,wTcAhYqpA0Gu5YLUU8/F1Q,lkJk492v/USHPp2XijOhvg,,,N,0,0,,,2014-04-13 07:21,2014-04-14 17:03,admin,admin,
3753,143850,6971,40042,7842,0,N,N,N,CP_Phys,TT_Task,DT_FixedDrtn,TK_NotStart,CZA-TK-0602-2070,"Cutting, Bevelling & Rolling of Shell No.4",8504,2906,0,20,0,3413.6556,3413.6556,20,0,0,0,,,,2015-02-24 15:00,2015-02-26 15:00,,2014-03-23 09:00,2014-03-25 09:00,2014-03-23 09:00,2014-03-25 09:00,2014-03-23 09:00,2014-03-25 09:00,2015-02-24 15:00,2015-02-26 15:00,,PT_Normal,,,,,XuehA+Qc902oVIoEr1kb3Q,oYa/PfqPOki1GhXj+ND/Jg,,,N,0,0,,,2014-04-13 07:21,2014-04-14 17:03,admin,admin,
3754,143851,6971,40042,7842,0,N,N,N,CP_Phys,TT_Task,DT_FixedDrtn,TK_NotStart,CZA-TK-0602-2080,"Cutting, Bevelling & Rolling of Shell No.3",8504,2906,0,20,0,3901.5027,3901.5027,20,0,0,0,,,,2015-02-24 15:00,2015-02-26 15:00,,2014-03-23 09:00,2014-03-25 09:00,2014-03-23 09:00,2014-03-25 09:00,2014-03-23 09:00,2014-03-25 09:00,2015-02-24 15:00,2015-02-26 15:00,,PT_Normal,,,,,DUted+vHOUyjPtONoWenYg,hwlbwUNJlUGbKb4HV819hg,,,N,0,0,,,2014-04-13 07:21,2014-04-14 17:03,admin,admin,
3755,143852,6971,40042,7842,0,N,N,N,CP_Phys,TT_Task,DT_FixedDrtn,TK_NotStart,CZA-TK-0602-2090,"Cutting, Bevelling & Rolling of Shell No.2",8504,2906,0,20,0,4633.3359,4633.3359,20,0,0,0,,,,2015-02-26 15:00,2015-03-01 15:00,,2014-03-25 09:00,2014-03-27 09:00,2014-03-25 09:00,2014-03-27 09:00,2014-03-25 09:00,2014-03-27 09:00,2015-02-26 15:00,2015-03-01 15:00,,PT_Normal,,,,,dHzyd+T1m0GAzJXQa5xBrg,X1Zm7ln5cUybzPHtMBEcaw,,,N,0,0,,,2014-04-13 07:21,2014-04-14 17:03,admin,admin,
3756,143853,6971,40042,7842,0,N,N,N,CP_Phys,TT_Task,DT_FixedDrtn,TK_NotStart,CZA-TK-0602-2100,"Cutting, Bevelling & Rolling of Shell No.1",8504,2906,0,20,0,2385.2265,2385.2265,20,0,0,0,,,,2015-03-01 15:00,2015-03-03 15:00,,2014-03-27 09:00,2014-03-30 09:00,2014-03-27 09:00,2014-03-30 09:00,2014-03-27 09:00,2014-03-30 09:00,2015-03-01 15:00,2015-03-03 15:00,,PT_Normal,,,,,/XWpsgNmokeuKV1rJPuqIQ,URYWy2Hu9UqhGgQfQBOGxQ,,,N,0,0,,,2014-04-13 07:21,2014-04-14 17:03,admin,admin,
3757,143854,6971,40042,7842,0,N,N,N,CP_Phys,TT_Task,DT_FixedDrtn,TK_NotStart,CZA-TK-0602-2110,"Cutting, Fit-up and Welding of Shell Nozzles, Manholes and Other Appurtances",8504,2906,0,70,0,160.1992,160.1992,70,0,0,0,,,,2015-03-01 15:00,2015-03-09 15:00,,2014-03-27 09:00,2014-04-05 09:00,2014-03-27 09:00,2014-04-05 09:00,2014-03-27 09:00,2014-04-05 09:00,2015-03-01 15:00,2015-03-09 15:00,,PT_Normal,,,,,GjKqk5QJBE+gZKg1YouL3A,l8xbogpcGkiaii2NUWNdOA,,,N,0,0,,,2014-04-13 07:21,2014-04-14 17:03,admin,admin,
3758,143855,6971,40042,7842,0,N,N,N,CP_Phys,TT_Task,DT_FixedDrtn,TK_NotStart,CZA-TK-0602-2120,"Cutting, Fit-up & Welding of Stairway Platform, Gratings and Handrails",8504,2906,1944,60,0,0,0,60,0,0,0,,,,2015-03-01 15:00,2015-03-08 15:00,,2014-03-27 09:00,2014-04-03 09:00,2014-03-27 09:00,2014-04-03 09:00,2014-03-27 09:00,2014-04-03 09:00,2015-03-01 15:00,2015-03-08 15:00,,PT_Normal,,,,,6gs7Qkf1eEqwph3Rug6Qjg,0D09Ap1RtkGdq9HBqskvug,,,N,0,0,,,2014-04-13 07:21,2014-04-14 17:03,admin,admin,
3759,143856,6971,40043,7842,0,N,N,N,CP_Phys,TT_Task,DT_FixedDrtn,TK_NotStart,CZA-TK-0602-2820,"Filling, Holding and Draining",8399,962,0,510,0,12964.152976,12964.152976,510,0,0,0,,,,2015-03-25 15:00,2015-05-24 15:00,,2014-12-03 13:00,2015-02-01 13:00,2014-12-03 13:00,2015-02-01 13:00,2014-12-03 13:00,2015-02-01 13:00,2015-03-25 15:00,2015-05-24 15:00,,PT_Normal,,,,,SRDhpgcO50iuSbev1z9BVg,pAd3OF/2ekaIKMOIE8RnDQ,,,N,0,0,,,2014-04-13 07:21,2014-04-14 16:04,admin,admin,
3760,143857,6971,40035,7842,0,N,N,N,CP_Phys,TT_Mile,DT_FixedDrtn,TK_NotStart,CZA-TK-0602-2130,Foundation Takeover From Client,,0,0,0,0,0,0,0,0,0,0,2014-04-25 00:00,,,2014-04-24 17:00,2014-04-24 17:00,,2014-04-26 07:00,2014-04-26 07:00,2014-04-26 07:00,2014-04-26 07:00,2014-04-26 07:00,2014-04-26 07:00,2014-04-24 17:00,2014-04-24 17:00,CS_MSO,PT_Normal,,,,,M2JVDBDfEkuN71nPhvbPrA,eY6hkfVMvE+oAN+N0hQzDQ,,,N,0,0,,,2014-04-13 07:21,2014-04-13 07:42,admin,admin,
3761,143858,6971,40036,7842,0,N,N,N,CP_Phys,TT_Task,DT_FixedDrtn,TK_NotStart,CZA-TK-0602-2830,"Blasting & Painting (Bottom, Shell & Roof) Inside and Outside",8399,992,0,200,0,7778.491786,7778.491786,200,0,0,0,,,,2015-05-27 15:00,2015-06-20 15:00,,2015-02-01 13:00,2015-02-24 13:00,2015-02-01 13:00,2015-02-24 13:00,2015-02-01 13:00,2015-02-24 13:00,2015-05-27 15:00,2015-06-20 15:00,,PT_Normal,,,,,U1EIL+H2VUeiOd15sDZvSw,o3qPT7FjLEuB6e9jWx6z9g,,,N,0,0,,,2014-04-13 07:21,2014-04-14 16:04,admin,admin,
3762,143859,6971,40047,7842,0,N,N,N,CP_Phys,TT_Mile,DT_FixedDrtn,TK_NotStart,CZA-TK-0606-2050,Foundation Takeover From Client,,0,0,0,0,0,0,0,0,0,0,2014-03-20 11:00,,,2014-03-20 11:00,2014-03-20 11:00,,2014-03-20 11:00,2014-03-20 11:00,2014-03-20 11:00,2014-03-20 11:00,2014-03-20 11:00,2014-03-20 11:00,2014-03-20 11:00,2014-03-20 11:00,CS_MSO,PT_Normal,,,,,ErZvFCG0Gka62xloH4vXWQ,u2/SmzJBeU+XSAtQMkvmSQ,,,N,0,0,,,2014-04-13 07:21,2014-04-13 07:21,admin,admin,
3763,143860,6971,40048,7842,0,N,N,N,CP_Phys,TT_Task,DT_FixedDrtn,TK_NotStart,CZA-TK-0606-2960,"Filling, Holding and Draining of Water",8401,972,0,140,0,5850.859973,5850.859973,140,0,0,0,,,,2015-05-14 15:00,2015-05-31 15:00,,2015-01-21 13:00,2015-02-07 13:00,2015-01-21 13:00,2015-02-07 13:00,2015-01-21 13:00,2015-02-07 13:00,2015-05-14 15:00,2015-05-31 15:00,,PT_Normal,,,,,gpNENw4KkUeX84erf2CDQg,VItbF6PYY0OXqUdo8DlpEA,,,N,0,0,,,2014-04-13 07:21,2014-04-14 16:04,admin,admin,
3764,143861,6971,40049,7842,0,N,N,N,CP_Phys,TT_Task,DT_FixedDrtn,TK_NotStart,CZA-TK-0606-2980,Tank Calibration,8401,972,0,50,0,1170.171995,1170.171995,50,0,0,0,,,,2015-06-20 15:00,2015-06-25 15:00,,2015-02-26 13:00,2015-03-04 13:00,2015-02-26 13:00,2015-03-04 13:00,2015-02-26 13:00,2015-03-04 13:00,2015-06-20 15:00,2015-06-25 15:00,,PT_Normal,,,,,79HiY/EZrUiK0+KyUgCbcA,K4m/0DEOL0S9QtafEMsBkw,,,N,0,0,,,2014-04-13 07:21,2014-04-14 16:04,admin,admin,
3765,143862,6971,40049,7842,0,N,N,N,CP_Phys,TT_Task,DT_FixedDrtn,TK_NotStart,CZA-TK-0606-2990,Tank Handover,8401,972,972,20,0,1170.171995,1170.171995,20,0,0,0,,,,2015-06-25 15:00,2015-06-28 15:00,,2015-03-04 13:00,2015-03-07 13:00,2015-03-04 13:00,2015-03-07 13:00,2015-03-04 13:00,2015-03-07 13:00,2015-06-25 15:00,2015-06-28 15:00,,PT_Normal,,,,,8cW7QiyVQEePqhJNg6WBwA,OlAw/MuGUka+xaQqjRSfVg,,,N,0,0,,,2014-04-13 07:21,2014-04-14 16:04,admin,admin,
3766,143863,6971,39969,7842,0,N,N,N,CP_Phys,TT_Task,DT_FixedDrtn,TK_NotStart,CZA-TK-0606-2970,"Blasting and Painting Inside, Outside and Bottom Plates",8401,972,0,170,0,3510.515984,3510.515984,170,0,0,0,,,,2015-05-31 15:00,2015-06-20 15:00,,2015-02-07 13:00,2015-02-26 13:00,2015-02-07 13:00,2015-02-26 13:00,2015-02-07 13:00,2015-02-26 13:00,2015-05-31 15:00,2015-06-20 15:00,,PT_Normal,,,,,iA0YFo9crkuGMSu1l/i51A,meQz4CuBckecIZZDiYWupg,,,N,0,0,,,2014-04-13 07:21,2014-04-14 16:04,admin,admin,
3767,143864,6971,40579,7842,0,N,N,N,CP_Phys,TT_Task,DT_FixedDrtn,TK_NotStart,CZA-TK-0606-2310,Laying and Fit-up,8401,2081.333333,0,10,0,211.904884,211.904884,10,30,0,30,,,,2014-11-18 12:20,2014-11-19 12:20,,2014-03-20 11:00,2014-03-22 11:00,2014-03-20 11:00,2014-03-22 11:00,2014-03-20 11:00,2014-03-22 11:00,2014-11-18 12:20,2014-11-19 12:20,,PT_Normal,,,,,UHyLSRzcoE2cB5/i4rdw3w,7jWdHw3xkUSvwsyUq4+TvQ,,,N,0,0,,,2014-04-13 07:21,2014-04-15 07:43,admin,admin,
3768,143865,6971,40579,7842,0,N,N,N,CP_Phys,TT_Task,DT_FixedDrtn,TK_NotStart,CZA-TK-0606-2320,Welding,8401,2081.333333,0,40,0,264.881105,264.881105,40,120,0,120,,,,2014-11-19 12:20,2014-11-24 12:20,,2014-03-22 11:00,2014-03-26 11:00,2014-03-22 11:00,2014-03-26 11:00,2014-03-22 11:00,2014-03-26 11:00,2014-11-19 12:20,2014-11-24 12:20,,PT_Normal,,,,,fyadQbZcNEulacWAX8gIoA,/Ar1/mkNjUe9AsrKKU2vVw,,,N,0,0,,,2014-04-13 07:21,2014-04-15 07:43,admin,admin,
3769,143866,6971,40579,7842,0,N,N,N,CP_Phys,TT_Task,DT_FixedDrtn,TK_NotStart,CZA-TK-0606-2330,Inspection,8401,2081.333333,0,50,0,52.976221,52.976221,50,0,0,0,,,,2014-11-18 12:20,2014-11-24 12:20,,2014-03-20 11:00,2014-03-26 11:00,2014-03-20 11:00,2014-03-26 11:00,2014-03-20 11:00,2014-03-26 11:00,2014-11-18 12:20,2014-11-24 12:20,,PT_Normal,,,,,69m7MjhrWEKlGVq3++hf6g,yesRTmtOcEKIYh/3idyoXw,,,N,0,0,,,2014-04-13 07:21,2014-04-15 07:43,admin,admin,
3770,143867,6971,40580,7842,0,N,N,N,CP_Phys,TT_Task,DT_FixedDrtn,TK_NotStart,CZA-TK-0606-2580,Laying and Fit-up,8401,2081.333333,0,20,0,573.952947,573.952947,20,60,0,60,,,,2015-02-01 11:00,2015-02-03 11:00,,2014-06-03 09:40,2014-06-05 09:40,2014-06-03 09:40,2014-06-05 09:40,2014-06-03 09:40,2014-06-05 09:40,2015-02-01 11:00,2015-02-03 11:00,,PT_Normal,,,,,n8uUD7qRCECyZkwSS3EC2A,1A6rjPp+HUeRq7zyTQjdAg,,,N,0,0,,,2014-04-13 07:21,2014-04-15 07:43,admin,admin,
3771,143868,6971,40580,7842,0,N,N,N,CP_Phys,TT_Task,DT_FixedDrtn,TK_NotStart,CZA-TK-0606-2590,Welding,8401,2081.333333,0,50,0,717.441184,717.441184,50,150,0,150,,,,2015-02-03 11:00,2015-02-09 11:00,,2014-06-05 09:40,2014-06-11 09:40,2014-06-05 09:40,2014-06-11 09:40,2014-06-05 09:40,2014-06-11 09:40,2015-02-03 11:00,2015-02-09 11:00,,PT_Normal,,,,,rt8tc4uNGUS2KTZQyFFGPQ,iwSvTbyFL0G2pIEVJc3uLg,,,N,0,0,,,2014-04-13 07:21,2014-04-15 07:43,admin,admin,
3772,143869,6971,40580,7842,0,N,N,N,CP_Phys,TT_Task,DT_FixedDrtn,TK_NotStart,CZA-TK-0606-2600,Inspection,8401,2081.333333,0,70,0,143.488237,143.488237,70,0,0,0,,,,2015-02-01 11:00,2015-02-09 11:00,,2014-06-03 09:40,2014-06-11 09:40,2014-06-03 09:40,2014-06-11 09:40,2014-06-03 09:40,2014-06-11 09:40,2015-02-01 11:00,2015-02-09 11:00,,PT_Normal,,,,,R/2NPLNciEqkt8WgS7gdLQ,cCr18grYuU+kl4IS9PGX2A,,,N,0,0,,,2014-04-13 07:21,2014-04-15 07:43,admin,admin,
3773,143870,6971,40581,7842,0,N,N,N,CP_Phys,TT_Task,DT_FixedDrtn,TK_NotStart,CZA-TK-0606-2610,Laying and Fit-up,8401,2081.333333,0,11.333333,0,0,0,11.333333,0,0,0,,,,2015-02-09 11:00,2015-02-10 12:20,,2014-06-11 09:40,2014-06-12 11:00,2014-06-11 09:40,2014-06-12 11:00,2014-06-11 09:40,2014-06-12 11:00,2015-02-09 11:00,2015-02-10 12:20,,PT_Normal,,,,,jH7vUonPT06ikOFdnj3kPQ,z8KvcqyBhk2BzdMsyaSrPQ,,,N,0,0,,,2014-04-13 07:21,2014-04-15 07:43,admin,admin,
3774,143871,6971,40581,7842,0,N,N,N,CP_Phys,TT_Task,DT_FixedDrtn,TK_NotStart,CZA-TK-0606-2620,Welding,8401,2081.333333,0,40,0,0,0,40,120,0,120,,,,2015-02-10 12:20,2015-02-15 12:20,,2014-06-12 11:00,2014-06-17 11:00,2014-06-12 11:00,2014-06-17 11:00,2014-06-12 11:00,2014-06-17 11:00,2015-02-10 12:20,2015-02-15 12:20,,PT_Normal,,,,,hspbkXVZtkKPRY6SADxphA,XwdgOZhlMU+teJ/Hnm/IXQ,,,N,0,0,,,2014-04-13 07:21,2014-04-15 07:43,admin,admin,
3775,143872,6971,40581,7842,0,N,N,N,CP_Phys,TT_Task,DT_FixedDrtn,TK_NotStart,CZA-TK-0606-2630,Inspection,8401,2081.333333,0,50,0,0,0,50,0,0,0,,,,2015-02-09 12:20,2015-02-15 12:20,,2014-06-11 11:00,2014-06-17 11:00,2014-06-11 11:00,2014-06-17 11:00,2014-06-11 11:00,2014-06-17 11:00,2015-02-09 12:20,2015-02-15 12:20,,PT_Normal,,,,,MEmQx3VGP0uZV2kX3AHK4A,EwemXGcutUCicdBGIgOVSw,,,N,0,0,,,2014-04-13 07:21,2014-04-15 07:43,admin,admin,
3776,143873,6971,40582,7842,0,N,N,N,CP_Phys,TT_Task,DT_FixedDrtn,TK_NotStart,CZA-TK-0606-2640,"Cutting,lnstallation and Fit-up",8401,2081.333333,0,22.5,0,0,0,22.5,0,0,0,,,,2015-02-15 12:20,2015-02-17 14:50,,2014-06-17 11:00,2014-06-19 13:30,2014-06-17 11:00,2014-06-19 13:30,2014-06-17 11:00,2014-06-19 13:30,2015-02-15 12:20,2015-02-17 14:50,,PT_Normal,,,,,Bm26BGZ2e0qETY5Sz3Eg0g,BzGPJVqJr02jnQBNHCho+w,,,N,0,0,,,2014-04-13 07:21,2014-04-15 07:43,admin,admin,
3777,143874,6971,40582,7842,0,N,N,N,CP_Phys,TT_Task,DT_FixedDrtn,TK_NotStart,CZA-TK-0606-2650,Welding,8401,2081.333333,0,50,0,0,0,50,150,0,150,,,,2015-02-17 14:50,2015-02-23 14:50,,2014-06-19 13:30,2014-06-25 13:30,2014-06-19 13:30,2014-06-25 13:30,2014-06-19 13:30,2014-06-25 13:30,2015-02-17 14:50,2015-02-23 14:50,,PT_Normal,,,,,ll0/PezRDUCGEK99oOyTIg,4CnGCapZJ0GmaLQ3/1gAZQ,,,N,0,0,,,2014-04-13 07:21,2014-04-15 07:43,admin,admin,
3778,143875,6971,40582,7842,0,N,N,N,CP_Phys,TT_Task,DT_FixedDrtn,TK_NotStart,CZA-TK-0606-2660,Inspection,8401,2081.333333,0,72.5,0,0,0,72.5,0,0,0,,,,2015-02-15 12:20,2015-02-23 14:50,,2014-06-17 11:00,2014-06-25 13:30,2014-06-17 11:00,2014-06-25 13:30,2014-06-17 11:00,2014-06-25 13:30,2015-02-15 12:20,2015-02-23 14:50,,PT_Normal,,,,,y9iytuNjskKm8mhOE9V9kw,L4gTHJsomUSFEDNHLqSsnw,,,N,0,0,,,2014-04-13 07:21,2014-04-15 07:43,admin,admin,
3779,143876,6971,40583,7842,0,N,N,N,CP_Phys,TT_Task,DT_FixedDrtn,TK_NotStart,CZA-TK-0606-2670,Erection and Fit-up,8401,2081.333333,0,40,0,0,0,40,120,0,120,,,,2015-02-15 12:20,2015-02-19 12:20,,2014-06-17 11:00,2014-06-22 11:00,2014-06-17 11:00,2014-06-22 11:00,2014-06-17 11:00,2014-06-22 11:00,2015-02-15 12:20,2015-02-19 12:20,,PT_Normal,,,,,Y4KCzvKZsU6SYCLyb0VCow,HBtHxzcNcUmOzo7U42T9lA,,,N,0,0,,,2014-04-13 07:21,2014-04-15 07:43,admin,admin,
3780,143877,6971,40583,7842,0,N,N,N,CP_Phys,TT_Task,DT_FixedDrtn,TK_NotStart,CZA-TK-0606-2680,Welding,8401,2081.333333,0,100,0,0,0,100,300,0,300,,,,2015-02-19 12:20,2015-03-03 12:20,,2014-06-22 11:00,2014-07-03 11:00,2014-06-22 11:00,2014-07-03 11:00,2014-06-22 11:00,2014-07-03 11:00,2015-02-19 12:20,2015-03-03 12:20,,PT_Normal,,,,,0FeOIF1vEkqIH99doFTdwQ,4d7Kwxr5Z0KHotlYoyx0RQ,,,N,0,0,,,2014-04-13 07:21,2014-04-15 07:43,admin,admin,
3781,143878,6971,40583,7842,0,N,N,N,CP_Phys,TT_Task,DT_FixedDrtn,TK_NotStart,CZA-TK-0606-2690,Inspection,8401,2081.333333,0,140,0,0,0,140,0,0,0,,,,2015-02-15 12:20,2015-03-03 12:20,,2014-06-17 11:00,2014-07-03 11:00,2014-06-17 11:00,2014-07-03 11:00,2014-06-17 11:00,2014-07-03 11:00,2015-02-15 12:20,2015-03-03 12:20,,PT_Normal,,,,,A4oclpPmFU2MO88yTiTvFQ,LD0vzl5NJE+cNrpPjdUQBQ,,,N,0,0,,,2014-04-13 07:21,2014-04-15 07:43,admin,admin,
3782,143879,6971,40584,7842,0,N,N,N,CP_Phys,TT_Task,DT_FixedDrtn,TK_NotStart,CZA-TK-0606-2700,"Jacking, Erection and Fit-up",8401,2081.333333,0,10,0,157.944195,157.944195,10,30,0,30,,,,2015-03-03 12:20,2015-03-04 12:20,,2014-07-03 11:00,2014-07-05 11:00,2014-07-03 11:00,2014-07-05 11:00,2014-07-03 11:00,2014-07-05 11:00,2015-03-03 12:20,2015-03-04 12:20,,PT_Normal,,,,,e3ZmGuxLpEaO14g2hcnWng,bBPlsX6tjku7789s41yStQ,,,N,0,0,,,2014-04-13 07:21,2014-04-15 07:43,admin,admin,
3783,143880,6971,40584,7842,0,N,N,N,CP_Phys,TT_Task,DT_FixedDrtn,TK_NotStart,CZA-TK-0606-2710,Welding,8401,2081.333333,0,50,0,197.430244,197.430244,50,150,0,150,,,,2015-03-04 12:20,2015-03-10 12:20,,2014-07-05 11:00,2014-07-10 11:00,2014-07-05 11:00,2014-07-10 11:00,2014-07-05 11:00,2014-07-10 11:00,2015-03-04 12:20,2015-03-10 12:20,,PT_Normal,,,,,6tS718WciES2gpoAsjVTrg,OCNDugcjikmNx4h5/HTAbw,,,N,0,0,,,2014-04-13 07:21,2014-04-15 07:43,admin,admin,
3784,143881,6971,40584,7842,0,N,N,N,CP_Phys,TT_Task,DT_FixedDrtn,TK_NotStart,CZA-TK-0606-2720,Inspection,8401,2081.333333,0,60,0,39.486049,39.486049,60,0,0,0,,,,2015-03-03 12:20,2015-03-10 12:20,,2014-07-03 11:00,2014-07-10 11:00,2014-07-03 11:00,2014-07-10 11:00,2014-07-03 11:00,2014-07-10 11:00,2015-03-03 12:20,2015-03-10 12:20,,PT_Normal,,,,,kvT2NiLQmUeTl6IB3bLeLQ,rhRj7kMyO06Rapcm9PyILg,,,N,0,0,,,2014-04-13 07:21,2014-04-15 07:43,admin,admin,
3785,143882,6971,40585,7842,0,N,N,N,CP_Phys,TT_Task,DT_FixedDrtn,TK_NotStart,CZA-TK-0606-2730,"Jacking,Erection and Fit-up",8401,2081.333333,0,11.333333,0,203.084597,203.084597,11.333333,0,0,0,,,,2015-03-10 12:20,2015-03-11 13:40,,2014-07-10 11:00,2014-07-12 12:20,2014-07-10 11:00,2014-07-12 12:20,2014-07-10 11:00,2014-07-12 12:20,2015-03-10 12:20,2015-03-11 13:40,,PT_Normal,,,,,EzqAEi3QT0urlfIGGpAtYw,KV6qfBKxVUWAQ+Fk4EmnSQ,,,N,0,0,,,2014-04-13 07:21,2014-04-15 07:43,admin,admin,
3786,143883,6971,40585,7842,0,N,N,N,CP_Phys,TT_Task,DT_FixedDrtn,TK_NotStart,CZA-TK-0606-2740,Welding,8401,2081.333333,0,50,0,253.855747,253.855747,50,150,0,150,,,,2015-03-11 13:40,2015-03-17 13:40,,2014-07-12 12:20,2014-07-17 12:20,2014-07-12 12:20,2014-07-17 12:20,2014-07-12 12:20,2014-07-17 12:20,2015-03-11 13:40,2015-03-17 13:40,,PT_Normal,,,,,YyQx68QaTUe+Ib5VQL622A,BAaP2+WYl0GHHe5/U2gQGQ,,,N,0,0,,,2014-04-13 07:21,2014-04-15 07:43,admin,admin,
3787,143884,6971,40585,7842,0,N,N,N,CP_Phys,TT_Task,DT_FixedDrtn,TK_NotStart,CZA-TK-0606-2750,Inspection,8401,2081.333333,0,60,0,50.771149,50.771149,60,0,0,0,,,,2015-03-10 13:40,2015-03-17 13:40,,2014-07-10 12:20,2014-07-17 12:20,2014-07-10 12:20,2014-07-17 12:20,2014-07-10 12:20,2014-07-17 12:20,2015-03-10 13:40,2015-03-17 13:40,,PT_Normal,,,,,uIfdNXn11kuKAAhC53Lqgg,9D6iIgplwUKP84St0Dil4Q,,,N,0,0,,,2014-04-13 07:21,2014-04-15 07:43,admin,admin,
3788,143885,6971,40586,7842,0,N,N,N,CP_Phys,TT_Task,DT_FixedDrtn,TK_NotStart,CZA-TK-0606-2760,"Jacking,Erection and Fit-up",8401,2081.333333,0,11.333333,0,248.233011,248.233011,11.333333,0,0,0,,,,2015-03-17 13:40,2015-03-18 15:00,,2014-07-17 12:20,2014-07-19 13:40,2014-07-17 12:20,2014-07-19 13:40,2014-07-17 12:20,2014-07-19 13:40,2015-03-17 13:40,2015-03-18 15:00,,PT_Normal,,,,,0jrjXRZhdkqPQeriZEvlvw,US6WmYNRrkO7fu1v/Fl48Q,,,N,0,0,,,2014-04-13 07:21,2014-04-15 07:43,admin,admin,
3789,143886,6971,40586,7842,0,N,N,N,CP_Phys,TT_Task,DT_FixedDrtn,TK_NotStart,CZA-TK-0606-2770,Welding,8401,2081.333333,0,50,0,310.291264,310.291264,50,150,0,150,,,,2015-03-18 15:00,2015-03-24 15:00,,2014-07-19 13:40,2014-07-24 13:40,2014-07-19 13:40,2014-07-24 13:40,2014-07-19 13:40,2014-07-24 13:40,2015-03-18 15:00,2015-03-24 15:00,,PT_Normal,,,,,7BT+Q9PzsEeDVppiWLLkdg,vleUdqEdAUmDSgrYggu0Bg,,,N,0,0,,,2014-04-13 07:21,2014-04-15 07:43,admin,admin,
3790,143887,6971,40586,7842,0,N,N,N,CP_Phys,TT_Task,DT_FixedDrtn,TK_NotStart,CZA-TK-0606-2780,Inspection,8401,2081.333333,0,60,0,62.058253,62.058253,60,0,0,0,,,,2015-03-17 15:00,2015-03-24 15:00,,2014-07-17 13:40,2014-07-24 13:40,2014-07-17 13:40,2014-07-24 13:40,2014-07-17 13:40,2014-07-24 13:40,2015-03-17 15:00,2015-03-24 15:00,,PT_Normal,,,,,EbOJ04EHyEK8n+cfJlhUmw,LQWfLv+/JUKtiP9XoBVzFQ,,,N,0,0,,,2014-04-13 07:21,2014-04-15 07:43,admin,admin,
3791,143888,6971,40587,7842,0,N,N,N,CP_Phys,TT_Task,DT_FixedDrtn,TK_NotStart,CZA-TK-0606-2790,"Jacking, Erection and Fit-up",8401,2081.333333,0,10,0,293.385365,293.385365,10,30,0,30,,,,2015-03-24 15:00,2015-03-25 15:00,,2014-07-24 13:40,2014-07-26 13:40,2014-07-24 13:40,2014-07-26 13:40,2014-07-24 13:40,2014-07-26 13:40,2015-03-24 15:00,2015-03-25 15:00,,PT_Normal,,,,,eQmTepmgBUmQomc4MJCOvw,dVsAJJcJCUSc3SIjBYmPtw,,,N,0,0,,,2014-04-13 07:21,2014-04-15 07:43,admin,admin,
3792,143889,6971,40587,7842,0,N,N,N,CP_Phys,TT_Task,DT_FixedDrtn,TK_NotStart,CZA-TK-0606-2800,Welding,8401,2081.333333,0,50,0,366.731706,366.731706,50,150,0,150,,,,2015-03-25 15:00,2015-03-31 15:00,,2014-07-26 13:40,2014-07-31 13:40,2014-07-26 13:40,2014-07-31 13:40,2014-07-26 13:40,2014-07-31 13:40,2015-03-25 15:00,2015-03-31 15:00,,PT_Normal,,,,,diTCZ4UytUmJpyTNLfzq+g,VphwwVxGWEudg0LNDI94gw,,,N,0,0,,,2014-04-13 07:21,2014-04-15 07:43,admin,admin,
3793,143890,6971,40587,7842,0,N,N,N,CP_Phys,TT_Task,DT_FixedDrtn,TK_NotStart,CZA-TK-0606-2810,Inspection,8401,2081.333333,0,60,0,73.346341,73.346341,60,0,0,0,,,,2015-03-24 15:00,2015-03-31 15:00,,2014-07-24 13:40,2014-07-31 13:40,2014-07-24 13:40,2014-07-31 13:40,2014-07-24 13:40,2014-07-31 13:40,2015-03-24 15:00,2015-03-31 15:00,,PT_Normal,,,,,QFCO2c9svkGu2HRkXaUCIA,VZ65Zji82Um2Co53gH3pqQ,,,N,0,0,,,2014-04-13 07:21,2014-04-15 07:43,admin,admin,
3794,143891,6971,40588,7842,0,N,N,N,CP_Phys,TT_Task,DT_FixedDrtn,TK_NotStart,CZA-TK-0606-2820,"Jacking, Erection and Fit-up",8401,2081.333333,0,10,0,450.134041,450.134041,10,30,0,30,,,,2015-03-31 15:00,2015-04-01 15:00,,2014-07-31 13:40,2014-08-02 13:40,2014-07-31 13:40,2014-08-02 13:40,2014-07-31 13:40,2014-08-02 13:40,2015-03-31 15:00,2015-04-01 15:00,,PT_Normal,,,,,6gZwYYxSi0KK5yeTfn6jIA,TLdBT9LmAk6tPcYY+HRTLQ,,,N,0,0,,,2014-04-13 07:21,2014-04-15 07:43,admin,admin,
3795,143892,6971,40588,7842,0,N,N,N,CP_Phys,TT_Task,DT_FixedDrtn,TK_NotStart,CZA-TK-0606-2830,Welding,8401,2081.333333,0,50,0,562.667551,562.667551,50,150,0,150,,,,2015-04-01 15:00,2015-04-07 15:00,,2014-08-02 13:40,2014-08-07 13:40,2014-08-02 13:40,2014-08-07 13:40,2014-08-02 13:40,2014-08-07 13:40,2015-04-01 15:00,2015-04-07 15:00,,PT_Normal,,,,,MkEst2uVyECBKpLOmbz1BA,UwbVaJQkA0+X4D5fTDjV+Q,,,N,0,0,,,2014-04-13 07:21,2014-04-15 07:43,admin,admin,
3796,143893,6971,40588,7842,0,N,N,N,CP_Phys,TT_Task,DT_FixedDrtn,TK_NotStart,CZA-TK-0606-2840,Inspection,8401,2081.333333,0,60,0,112.53351,112.53351,60,0,0,0,,,,2015-03-31 15:00,2015-04-07 15:00,,2014-07-31 13:40,2014-08-07 13:40,2014-07-31 13:40,2014-08-07 13:40,2014-07-31 13:40,2014-08-07 13:40,2015-03-31 15:00,2015-04-07 15:00,,PT_Normal,,,,,Waq+aojJGkiNYuwjBdOpjg,O8cpYLp+p0Kq2XPN1RtMGw,,,N,0,0,,,2014-04-13 07:21,2014-04-15 07:43,admin,admin,
3797,143894,6971,40589,7842,0,N,N,N,CP_Phys,TT_Task,DT_FixedDrtn,TK_NotStart,CZA-TK-0606-2850,"Jacking, Erection and Fit-up",8401,2081.333333,0,10,0,450.134041,450.134041,10,30,0,30,,,,2015-04-07 15:00,2015-04-08 15:00,,2014-08-07 13:40,2014-08-09 13:40,2014-08-07 13:40,2014-08-09 13:40,2014-08-07 13:40,2014-08-09 13:40,2015-04-07 15:00,2015-04-08 15:00,,PT_Normal,,,,,dePg/Nqt9U6YlshsvfK21A,lnP3OJQueka1edBQECEmnA,,,N,0,0,,,2014-04-13 07:21,2014-04-15 07:43,admin,admin,
3798,143895,6971,40589,7842,0,N,N,N,CP_Phys,TT_Task,DT_FixedDrtn,TK_NotStart,CZA-TK-0606-2860,Welding,8401,2081.333333,0,50,0,562.667551,562.667551,50,150,0,150,,,,2015-04-08 15:00,2015-04-14 15:00,,2014-08-09 13:40,2014-08-14 13:40,2014-08-09 13:40,2014-08-14 13:40,2014-08-09 13:40,2014-08-14 13:40,2015-04-08 15:00,2015-04-14 15:00,,PT_Normal,,,,,4s0J/odYTkK32dMRtp9L0w,6XRjiA250EaDi0S6W7Xi6A,,,N,0,0,,,2014-04-13 07:21,2014-04-15 07:43,admin,admin,
3799,143896,6971,40589,7842,0,N,N,N,CP_Phys,TT_Task,DT_FixedDrtn,TK_NotStart,CZA-TK-0606-2870,Inspection,8401,2081.333333,0,60,0,112.53351,112.53351,60,0,0,0,,,,2015-04-07 15:00,2015-04-14 15:00,,2014-08-07 13:40,2014-08-14 13:40,2014-08-07 13:40,2014-08-14 13:40,2014-08-07 13:40,2014-08-14 13:40,2015-04-07 15:00,2015-04-14 15:00,,PT_Normal,,,,,3jx1U/pqo0mNTvqH2SYzsA,TDmHQyAjn0+TvfaCgCrV5Q,,,N,0,0,,,2014-04-13 07:21,2014-04-15 07:43,admin,admin,
3800,143897,6971,40590,7842,0,N,N,N,CP_Phys,TT_Task,DT_FixedDrtn,TK_NotStart,CZA-TK-0606-2880,"Lay-out, Cutting, and Fit-up",8401,2081.333333,0,30,0,0,0,30,90,0,90,,,,2015-04-14 15:00,2015-04-18 15:00,,2014-08-14 13:40,2014-08-18 13:40,2014-08-14 13:40,2014-08-18 13:40,2014-08-14 13:40,2014-08-18 13:40,2015-04-14 15:00,2015-04-18 15:00,,PT_Normal,,,,,9IrFQXjy0USNXAPDq3+DOA,7OP8FBP3lkKrOB9bCnFwwg,,,N,0,0,,,2014-04-13 07:21,2014-04-15 07:43,admin,admin,
3801,143898,6971,40590,7842,0,N,N,N,CP_Phys,TT_Task,DT_FixedDrtn,TK_NotStart,CZA-TK-0606-2890,Welding,8401,2081.333333,0,40,0,0,0,40,120,0,120,,,,2015-04-18 15:00,2015-04-22 15:00,,2014-08-18 13:40,2014-08-23 13:40,2014-08-18 13:40,2014-08-23 13:40,2014-08-18 13:40,2014-08-23 13:40,2015-04-18 15:00,2015-04-22 15:00,,PT_Normal,,,,,lryxPWzKd0SQhtAgSjgtLg,wmdpRLnkcUWuYzTtMRdIFw,,,N,0,0,,,2014-04-13 07:21,2014-04-15 07:43,admin,admin,
3802,143899,6971,40590,7842,0,N,N,N,CP_Phys,TT_Task,DT_FixedDrtn,TK_NotStart,CZA-TK-0606-2900,Inspection,8401,2081.333333,0,70,0,0,0,70,0,0,0,,,,2015-04-14 15:00,2015-04-22 15:00,,2014-08-14 13:40,2014-08-23 13:40,2014-08-14 13:40,2014-08-23 13:40,2014-08-14 13:40,2014-08-23 13:40,2015-04-14 15:00,2015-04-22 15:00,,PT_Normal,,,,,QOyj73LxhEurXAGsANYg9A,08RErwFzJUaPXIBGuOyGMQ,,,N,0,0,,,2014-04-13 07:21,2014-04-15 07:43,admin,admin,
3803,143900,6971,40591,7842,0,N,N,N,CP_Phys,TT_Task,DT_FixedDrtn,TK_NotStart,CZA-TK-0606-2910,Erection and Fit-up,8401,2081.333333,0,40,0,0,0,40,120,0,120,,,,2015-04-22 15:00,2015-04-27 15:00,,2014-08-23 13:40,2014-08-27 13:40,2014-08-23 13:40,2014-08-27 13:40,2014-08-23 13:40,2014-08-27 13:40,2015-04-22 15:00,2015-04-27 15:00,,PT_Normal,,,,,PRpjD0hh2EedrrQwEtiTJA,59gRQVRvIk6NWmczONRVPg,,,N,0,0,,,2014-04-13 07:21,2014-04-15 07:43,admin,admin,
3804,143901,6971,40591,7842,0,N,N,N,CP_Phys,TT_Task,DT_FixedDrtn,TK_NotStart,CZA-TK-0606-2920,Welding,8401,2081.333333,0,100,0,0,0,100,300,0,300,,,,2015-04-27 15:00,2015-05-09 15:00,,2014-08-27 13:40,2014-09-08 13:40,2014-08-27 13:40,2014-09-08 13:40,2014-08-27 13:40,2014-09-08 13:40,2015-04-27 15:00,2015-05-09 15:00,,PT_Normal,,,,,CBQ/xOG/+0a62Yfgzm1FXw,7UR6gVLC5k6+Y1TOanCwkw,,,N,0,0,,,2014-04-13 07:21,2014-04-15 07:43,admin,admin,
3805,143902,6971,40591,7842,0,N,N,N,CP_Phys,TT_Task,DT_FixedDrtn,TK_NotStart,CZA-TK-0606-2930,Inspection,8401,2081.333333,0,140,0,0,0,140,0,0,0,,,,2015-04-22 15:00,2015-05-09 15:00,,2014-08-23 13:40,2014-09-08 13:40,2014-08-23 13:40,2014-09-08 13:40,2014-08-23 13:40,2014-09-08 13:40,2015-04-22 15:00,2015-05-09 15:00,,PT_Normal,,,,,iKXaJ3iwwEqSbB1hf+zbAw,dsSui+xAgE66llySbLezHQ,,,N,0,0,,,2014-04-13 07:21,2014-04-15 07:43,admin,admin,
3806,143903,6971,40592,7842,0,N,N,N,CP_Phys,TT_Task,DT_FixedDrtn,TK_NotStart,CZA-TK-0606-2940,Installation of Primary and Secondary Seal,8401,2081.333333,0,40,0,0,0,40,0,0,0,,,,2015-05-09 15:00,2015-05-13 15:00,,2014-09-08 13:40,2014-09-13 13:40,2014-09-08 13:40,2014-09-13 13:40,2014-09-08 13:40,2014-09-13 13:40,2015-05-09 15:00,2015-05-13 15:00,,PT_Normal,,,,,1N5jMVxtUEaEqCF6WuCwOQ,utmU0u/fb0ScYdesBdpBzg,,,N,0,0,,,2014-04-13 07:21,2014-04-15 07:43,admin,admin,
3807,143904,6971,40592,7842,0,N,N,N,CP_Phys,TT_Task,DT_FixedDrtn,TK_NotStart,CZA-TK-0606-2950,Inspection,8401,2081.333333,1109.333333,10,0,0,0,10,0,0,0,,,,2015-05-13 15:00,2015-05-14 15:00,,2014-09-13 13:40,2014-09-14 13:40,2014-09-13 13:40,2014-09-14 13:40,2014-09-13 13:40,2014-09-14 13:40,2015-05-13 15:00,2015-05-14 15:00,,PT_Normal,,,,,6rmqw+6lFE+biVZEvA5DwQ,+PlEfWXwKUKLYw5tLRUYhg,,,N,0,0,,,2014-04-13 07:21,2014-04-15 07:43,admin,admin,
3808,143905,6971,40593,7842,0,N,N,N,CP_Phys,TT_Task,DT_FixedDrtn,TK_NotStart,CZA-TK-0606-2340,Laying and Fit-up,8401,2081.333333,0,30,0,211.904884,211.904884,30,90,0,90,,,,2014-11-24 12:20,2014-11-27 12:20,,2014-03-26 11:00,2014-03-30 11:00,2014-03-26 11:00,2014-03-30 11:00,2014-03-26 11:00,2014-03-30 11:00,2014-11-24 12:20,2014-11-27 12:20,,PT_Normal,,,,,jL1i0CeWV0KvJz9cqSpmzg,b8YxlpJEyEmBnjkgAEtpUw,,,N,0,0,,,2014-04-13 07:21,2014-04-15 07:43,admin,admin,
3809,143906,6971,40593,7842,0,N,N,N,CP_Phys,TT_Task,DT_FixedDrtn,TK_NotStart,CZA-TK-0606-2350,Welding,8401,2081.333333,0,70,0,264.881105,264.881105,70,210,0,210,,,,2014-11-27 12:20,2014-12-06 12:20,,2014-03-30 11:00,2014-04-07 11:00,2014-03-30 11:00,2014-04-07 11:00,2014-03-30 11:00,2014-04-07 11:00,2014-11-27 12:20,2014-12-06 12:20,,PT_Normal,,,,,Bp/BsjQjRk+pd7+JBMQInQ,DW/ZsNeNrUac0g0WkVpKVw,,,N,0,0,,,2014-04-13 07:21,2014-04-15 07:43,admin,admin,
3810,143907,6971,40593,7842,0,N,N,N,CP_Phys,TT_Task,DT_FixedDrtn,TK_NotStart,CZA-TK-0606-2360,Inspection,8401,2081.333333,0,100,0,52.976221,52.976221,100,0,0,0,,,,2014-11-24 12:20,2014-12-06 12:20,,2014-03-26 11:00,2014-04-07 11:00,2014-03-26 11:00,2014-04-07 11:00,2014-03-26 11:00,2014-04-07 11:00,2014-11-24 12:20,2014-12-06 12:20,,PT_Normal,,,,,boZTXimpREuod46Oq5sRoQ,VJucusMVska1J5odmhbbEA,,,N,0,0,,,2014-04-13 07:21,2014-04-15 07:43,admin,admin,
3811,143908,6971,40594,7842,0,N,N,N,CP_Phys,TT_Task,DT_FixedDrtn,TK_NotStart,CZA-TK-0606-2370,Erection and Fit-up,8401,2081.333333,0,10,0,135.375635,135.375635,10,30,0,30,,,,2014-12-06 12:20,2014-12-07 12:20,,2014-04-07 11:00,2014-04-08 11:00,2014-04-07 11:00,2014-04-08 11:00,2014-04-07 11:00,2014-04-08 11:00,2014-12-06 12:20,2014-12-07 12:20,,PT_Normal,,,,,vB7mUa+8906gsdyrMop5Tw,9OmBJQ9VIUarw8Ja5eraJA,,,N,0,0,,,2014-04-13 07:21,2014-04-15 07:43,admin,admin,
3812,143909,6971,40594,7842,0,N,N,N,CP_Phys,TT_Task,DT_FixedDrtn,TK_NotStart,CZA-TK-0606-2380,Welding,8401,2081.333333,0,50,0,169.219544,169.219544,50,150,0,150,,,,2014-12-07 12:20,2014-12-13 12:20,,2014-04-08 11:00,2014-04-14 11:00,2014-04-08 11:00,2014-04-14 11:00,2014-04-08 11:00,2014-04-14 11:00,2014-12-07 12:20,2014-12-13 12:20,,PT_Normal,,,,,pw02i0gmVUWykNYq1/BkRw,olAVcUszA0SIMD026hcksQ,,,N,0,0,,,2014-04-13 07:21,2014-04-15 07:43,admin,admin,
3813,143910,6971,40594,7842,0,N,N,N,CP_Phys,TT_Task,DT_FixedDrtn,TK_NotStart,CZA-TK-0606-2390,Inspection,8401,2081.333333,0,60,0,33.843909,33.843909,60,0,0,0,,,,2014-12-06 12:20,2014-12-13 12:20,,2014-04-07 11:00,2014-04-14 11:00,2014-04-07 11:00,2014-04-14 11:00,2014-04-07 11:00,2014-04-14 11:00,2014-12-06 12:20,2014-12-13 12:20,,PT_Normal,,,,,ylifRSYSkk2qL1RzbwGamA,kxZIt4a5J0KaQCxXSBtg5Q,,,N,0,0,,,2014-04-13 07:21,2014-04-15 07:43,admin,admin,
3814,143911,6971,40595,7842,0,N,N,N,CP_Phys,TT_Task,DT_FixedDrtn,TK_NotStart,CZA-TK-0606-2400,Erection and Fit-up,8401,2081.333333,0,10,0,135.375635,135.375635,10,0,0,0,,,,2014-12-13 12:20,2014-12-14 12:20,,2014-04-14 11:00,2014-04-15 11:00,2014-04-14 11:00,2014-04-15 11:00,2014-04-14 11:00,2014-04-15 11:00,2014-12-13 12:20,2014-12-14 12:20,,PT_Normal,,,,,3igtZ987W0W/j6sSneS3jg,dOjyrUh6XkSEpwzEAFRYHQ,,,N,0,0,,,2014-04-13 07:21,2014-04-15 07:43,admin,admin,
3815,143912,6971,40595,7842,0,N,N,N,CP_Phys,TT_Task,DT_FixedDrtn,TK_NotStart,CZA-TK-0606-2410,Welding,8401,2081.333333,0,50,0,169.219544,169.219544,50,150,0,150,,,,2014-12-14 12:20,2014-12-20 12:20,,2014-04-15 11:00,2014-04-21 11:00,2014-04-15 11:00,2014-04-21 11:00,2014-04-15 11:00,2014-04-21 11:00,2014-12-14 12:20,2014-12-20 12:20,,PT_Normal,,,,,wYQXWHS1vUGGNxElTM87cw,fa9A2DJbFUKM/nByWcxguw,,,N,0,0,,,2014-04-13 07:21,2014-04-15 07:43,admin,admin,
3816,143913,6971,40595,7842,0,N,N,N,CP_Phys,TT_Task,DT_FixedDrtn,TK_NotStart,CZA-TK-0606-2420,Inspection,8401,2081.333333,0,60,0,33.843909,33.843909,60,0,0,0,,,,2014-12-13 12:20,2014-12-20 12:20,,2014-04-14 11:00,2014-04-21 11:00,2014-04-14 11:00,2014-04-21 11:00,2014-04-14 11:00,2014-04-21 11:00,2014-12-13 12:20,2014-12-20 12:20,,PT_Normal,,,,,NcvhwCqeSUiua9mBNiGjbw,NtSj9brtXUGd8Rd2ZLCbYQ,,,N,0,0,,,2014-04-13 07:21,2014-04-15 07:43,admin,admin,
3817,143914,6971,40596,7842,0,N,N,N,CP_Phys,TT_Task,DT_FixedDrtn,TK_NotStart,CZA-TK-0606-2430,"Cutting, Installation and Fit-up",8401,2081.333333,0,20,0,0,0,20,60,0,60,,,,2014-12-20 12:20,2014-12-22 12:20,,2014-04-21 11:00,2014-04-23 11:00,2014-04-21 11:00,2014-04-23 11:00,2014-04-21 11:00,2014-04-23 11:00,2014-12-20 12:20,2014-12-22 12:20,,PT_Normal,,,,,eufRDnOdBker/iBLe5JF1g,IujYfekvtEqbMZwLp35sXA,,,N,0,0,,,2014-04-13 07:21,2014-04-15 07:43,admin,admin,
3818,143915,6971,40596,7842,0,N,N,N,CP_Phys,TT_Task,DT_FixedDrtn,TK_NotStart,CZA-TK-0606-2440,Welding,8401,2081.333333,0,50,0,0,0,50,150,0,150,,,,2014-12-22 12:20,2014-12-28 12:20,,2014-04-23 11:00,2014-04-29 11:00,2014-04-23 11:00,2014-04-29 11:00,2014-04-23 11:00,2014-04-29 11:00,2014-12-22 12:20,2014-12-28 12:20,,PT_Normal,,,,,UGLG/BFmMUO7VpmTcLUQPA,Yh1cGEXICESo82muI2Jn9Q,,,N,0,0,,,2014-04-13 07:21,2014-04-15 07:43,admin,admin,
3819,143916,6971,40596,7842,0,N,N,N,CP_Phys,TT_Task,DT_FixedDrtn,TK_NotStart,CZA-TK-0606-2450,Inspection,8401,2081.333333,0,70,0,0,0,70,0,0,0,,,,2014-12-20 12:20,2014-12-28 12:20,,2014-04-21 11:00,2014-04-29 11:00,2014-04-21 11:00,2014-04-29 11:00,2014-04-21 11:00,2014-04-29 11:00,2014-12-20 12:20,2014-12-28 12:20,,PT_Normal,,,,,c2dIGZYAVUKmEK+phqWyaA,isZUhqmMZ0qazR6J50jr2A,,,N,0,0,,,2014-04-13 07:21,2014-04-15 07:43,admin,admin,
3820,143917,6971,40597,7842,0,N,N,N,CP_Phys,TT_Task,DT_FixedDrtn,TK_NotStart,CZA-TK-0606-2460,Erection and Fit-up,8401,2081.333333,0,18.666667,0,0,0,18.666667,0,0,0,,,,2014-12-20 12:20,2014-12-22 11:00,,2014-04-21 11:00,2014-04-23 09:40,2014-04-21 11:00,2014-04-23 09:40,2014-04-21 11:00,2014-04-23 09:40,2014-12-20 12:20,2014-12-22 11:00,,PT_Normal,,,,,at4S93ukbE29SUA3Maa/jw,KklAF89XYkCuBqWbkvSRAg,,,N,0,0,,,2014-04-13 07:21,2014-04-15 07:43,admin,admin,
3821,143918,6971,40597,7842,0,N,N,N,CP_Phys,TT_Task,DT_FixedDrtn,TK_NotStart,CZA-TK-0606-2470,Welding,8401,2081.333333,0,40,0,0,0,40,0,0,0,,,,2014-12-22 11:00,2014-12-27 11:00,,2014-04-23 09:40,2014-04-28 09:40,2014-04-23 09:40,2014-04-28 09:40,2014-04-23 09:40,2014-04-28 09:40,2014-12-22 11:00,2014-12-27 11:00,,PT_Normal,,,,,wOJ05mTm2EO05SSicSgM5A,4fhv6vWIpk+BK14N6NZmSg,,,N,0,0,,,2014-04-13 07:21,2014-04-15 07:43,admin,admin,
3822,143919,6971,40597,7842,0,N,N,N,CP_Phys,TT_Task,DT_FixedDrtn,TK_NotStart,CZA-TK-0606-2480,Inspection,8401,2081.333333,0,58.666667,0,0,0,58.666667,0,0,0,,,,2014-12-20 12:20,2014-12-27 11:00,,2014-04-21 11:00,2014-04-28 09:40,2014-04-21 11:00,2014-04-28 09:40,2014-04-21 11:00,2014-04-28 09:40,2014-12-20 12:20,2014-12-27 11:00,,PT_Normal,,,,,ukw5mghNvk66sw6PgHo4nQ,ZQeKcDNchUajGZSPOcYk2A,,,N,0,0,,,2014-04-13 07:21,2014-04-15 07:43,admin,admin,
3823,143920,6971,40598,7842,0,N,N,N,CP_Phys,TT_Task,DT_FixedDrtn,TK_NotStart,CZA-TK-0606-2490,Laying and Fit-up,8401,2081.333333,0,20,0,0,0,20,60,0,60,,,,2014-12-27 11:00,2014-12-29 11:00,,2014-04-28 09:40,2014-04-30 09:40,2014-04-28 09:40,2014-04-30 09:40,2014-04-28 09:40,2014-04-30 09:40,2014-12-27 11:00,2014-12-29 11:00,,PT_Normal,,,,,Ccrcx24h+0uB+jZE5eK1RA,YpjtWpzJEkylnQ0sqNDKTA,,,N,0,0,,,2014-04-13 07:21,2014-04-15 07:43,admin,admin,
3824,143921,6971,40598,7842,0,N,N,N,CP_Phys,TT_Task,DT_FixedDrtn,TK_NotStart,CZA-TK-0606-2500,Welding,8401,2081.333333,0,80,0,0,0,80,240,0,240,,,,2014-12-29 11:00,2015-01-07 11:00,,2014-04-30 09:40,2014-05-10 09:40,2014-04-30 09:40,2014-05-10 09:40,2014-04-30 09:40,2014-05-10 09:40,2014-12-29 11:00,2015-01-07 11:00,,PT_Normal,,,,,zhtD9P402EGKuV4VKD9zTQ,RE0EAPrZBE2g3Bq65biVgw,,,N,0,0,,,2014-04-13 07:21,2014-04-15 07:43,admin,admin,
3825,143922,6971,40598,7842,0,N,N,N,CP_Phys,TT_Task,DT_FixedDrtn,TK_NotStart,CZA-TK-0606-2510,Inspection,8401,2081.333333,0,100,0,0,0,100,0,0,0,,,,2014-12-27 11:00,2015-01-07 11:00,,2014-04-28 09:40,2014-05-10 09:40,2014-04-28 09:40,2014-05-10 09:40,2014-04-28 09:40,2014-05-10 09:40,2014-12-27 11:00,2015-01-07 11:00,,PT_Normal,,,,,AiLWKBVASUanjbvYovpvdw,TTalVy3QEk+3yuZdVgrYrg,,,N,0,0,,,2014-04-13 07:21,2014-04-15 07:43,admin,admin,
3826,143923,6971,40599,7842,0,N,N,N,CP_Phys,TT_Task,DT_FixedDrtn,TK_NotStart,CZA-TK-0606-2520,"Laying, Cutting all Holes and Fit-up",8401,2081.333333,0,40,0,402.902957,402.902957,40,0,0,0,,,,2015-01-07 11:00,2015-01-12 11:00,,2014-05-10 09:40,2014-05-14 09:40,2014-05-10 09:40,2014-05-14 09:40,2014-05-10 09:40,2014-05-14 09:40,2015-01-07 11:00,2015-01-12 11:00,,PT_Normal,,,,,ZvD9pRkZrU22k7w7l68BKg,c0g+ywMYZkijiMl9jrv3cQ,,,N,0,0,,,2014-04-13 07:21,2014-04-15 07:43,admin,admin,
3827,143924,6971,40599,7842,0,N,N,N,CP_Phys,TT_Task,DT_FixedDrtn,TK_NotStart,CZA-TK-0606-2530,Welding,8401,2121.333333,40,100,0,503.628696,503.628696,100,300,0,300,,,,2015-01-12 11:00,2015-01-24 11:00,,2014-05-10 09:40,2014-05-21 09:40,2014-05-10 09:40,2014-05-21 09:40,2014-05-10 09:40,2014-05-21 09:40,2015-01-12 11:00,2015-01-24 11:00,,PT_Normal,,,,,oWhn6dG2A0W7DjYNkvMPtQ,FZ+T/z7tSEOjmtzBSEaqsA,,,N,0,0,,,2014-04-13 07:21,2014-04-15 07:43,admin,admin,
3828,143925,6971,40599,7842,0,N,N,N,CP_Phys,TT_Task,DT_FixedDrtn,TK_NotStart,CZA-TK-0606-2540,Inspection,8401,2081.333333,0,140,0,100.725739,100.725739,140,0,0,0,,,,2015-01-07 11:00,2015-01-24 11:00,,2014-05-10 09:40,2014-05-26 09:40,2014-05-10 09:40,2014-05-26 09:40,2014-05-10 09:40,2014-05-26 09:40,2015-01-07 11:00,2015-01-24 11:00,,PT_Normal,,,,,OLkfysv1wUyrmzbpBomGsg,QWe+eoV8MkCF304AaOor9Q,,,N,0,0,,,2014-04-13 07:21,2014-04-15 07:43,admin,admin,
3829,143926,6971,40600,7842,0,N,N,N,CP_Phys,TT_Task,DT_FixedDrtn,TK_NotStart,CZA-TK-0606-2550,Erection and Fit-up,8401,2081.333333,0,20,0,371.433079,371.433079,20,60,0,60,,,,2015-01-24 11:00,2015-01-26 11:00,,2014-05-26 09:40,2014-05-28 09:40,2014-05-26 09:40,2014-05-28 09:40,2014-05-26 09:40,2014-05-28 09:40,2015-01-24 11:00,2015-01-26 11:00,,PT_Normal,,,,,7P1tte/XKEu/VJNx2MOnxg,hQdluJzVPk+ikvMmkkupuA,,,N,0,0,,,2014-04-13 07:21,2014-04-15 07:43,admin,admin,
3830,143927,6971,40600,7842,0,N,N,N,CP_Phys,TT_Task,DT_FixedDrtn,TK_NotStart,CZA-TK-0606-2560,Welding,8401,2081.333333,0,50,0,464.291349,464.291349,50,150,0,150,,,,2015-01-26 11:00,2015-02-01 11:00,,2014-05-28 09:40,2014-06-03 09:40,2014-05-28 09:40,2014-06-03 09:40,2014-05-28 09:40,2014-06-03 09:40,2015-01-26 11:00,2015-02-01 11:00,,PT_Normal,,,,,pVA8GCyiRkW7e1DWbKFUNw,pv8BL5Tko0KWy60j9Y9/cQ,,,N,0,0,,,2014-04-13 07:21,2014-04-15 07:43,admin,admin,
3831,143928,6971,40600,7842,0,N,N,N,CP_Phys,TT_Task,DT_FixedDrtn,TK_NotStart,CZA-TK-0606-2570,Inspection,8401,2081.333333,0,70,0,92.85827,92.85827,70,0,0,0,,,,2015-01-24 11:00,2015-02-01 11:00,,2014-05-26 09:40,2014-06-03 09:40,2014-05-26 09:40,2014-06-03 09:40,2014-05-26 09:40,2014-06-03 09:40,2015-01-24 11:00,2015-02-01 11:00,,PT_Normal,,,,,hQ9mk4w9M0OszzzgaIwmUQ,jFuV2msiQ0WgAvddw7QSPA,,,N,0,0,,,2014-04-13 07:21,2014-04-15 07:43,admin,admin,
3832,143929,6971,40113,7842,0,N,N,N,CP_Phys,TT_Task,DT_FixedDrtn,TK_NotStart,CZA-TK-0606-1880,Cutting of Annular Plates and Bottom Plates,8506,2922,0,10,0,968.1,968.1,10,0,0,0,,,,2015-01-20 09:00,2015-01-21 09:00,,2014-02-13 07:00,2014-02-13 17:00,2014-02-13 07:00,2014-02-13 17:00,2014-02-13 07:00,2014-02-13 17:00,2015-01-20 09:00,2015-01-21 09:00,,PT_Normal,,,,,0TmhpoBjg0+SVRRfxMANcA,z6fKSFnJNkys4GTaieXYgw,,,N,0,0,,,2014-04-13 07:21,2014-04-14 17:03,admin,admin,
3833,143930,6971,40113,7842,0,N,N,N,CP_Phys,TT_Task,DT_FixedDrtn,TK_NotStart,CZA-TK-0606-1890,"Cutting,Bevelling & Rolling Shell No. 7",8506,3254,0,10,0,309.2358,309.2358,10,0,0,0,,,,2015-03-01 11:00,2015-03-02 11:00,,2014-02-15 07:00,2014-02-15 17:00,2014-02-15 07:00,2014-02-15 17:00,2014-02-15 07:00,2014-02-15 17:00,2015-03-01 11:00,2015-03-02 11:00,,PT_Normal,,,,,UAkQqLNRUkCqQVC2pAco7A,EhtHmQIGy0K9873kpHEmxQ,,,N,0,0,,,2014-04-13 07:21,2014-04-15 07:43,admin,admin,
3834,143931,6971,40113,7842,0,N,N,N,CP_Phys,TT_Task,DT_FixedDrtn,TK_NotStart,CZA-TK-0606-1900,"Cutting , Beveling & Rolling Shell No.8",8506,3254,0,10,0,309.2358,309.2358,10,0,0,0,,,,2015-03-02 11:00,2015-03-03 11:00,,2014-02-16 07:00,2014-02-16 17:00,2014-02-16 07:00,2014-02-16 17:00,2014-02-16 07:00,2014-02-16 17:00,2015-03-02 11:00,2015-03-03 11:00,,PT_Normal,,,,,zY6UO0HhG0y/5rwiHhKsbQ,oGSOB/azs02bxG5OsvUZXg,,,N,0,0,,,2014-04-13 07:21,2014-04-15 07:43,admin,admin,
3835,143932,6971,40113,7842,0,N,N,N,CP_Phys,TT_Task,DT_FixedDrtn,TK_NotStart,CZA-TK-0606-1910,"Cutting, Fit-up and Weld of Stairway Platform, gratings Handrails (Upper Part)",8506,3254,0,50,0,0,0,50,0,0,0,,,,2015-03-03 11:00,2015-03-09 11:00,,2014-02-17 07:00,2014-02-22 17:00,2014-02-17 07:00,2014-02-22 17:00,2014-02-17 07:00,2014-02-22 17:00,2015-03-03 11:00,2015-03-09 11:00,,PT_Normal,,,,,f+JYHgW9lUi8M0rxNJl1Jg,QHmDLA0C7UKsZyIICWodZw,,,N,0,0,,,2014-04-13 07:21,2014-04-15 07:43,admin,admin,
3836,143933,6971,40113,7842,0,N,N,N,CP_Phys,TT_Task,DT_FixedDrtn,TK_NotStart,CZA-TK-0606-1920,Cutting of Floating Roof Plates,8506,3254,0,40,0,0,0,40,0,0,0,,,,2015-03-05 15:00,2015-03-10 15:00,,2014-02-19 11:00,2014-02-24 11:00,2014-02-19 11:00,2014-02-24 11:00,2014-02-19 11:00,2014-02-24 11:00,2015-03-05 15:00,2015-03-10 15:00,,PT_Normal,,,,,xbV/SPCzEkCnQCpWhx6esg,+/y3VQO9q0W+BN9XTpveJQ,,,N,0,0,,,2014-04-13 07:21,2014-04-15 07:43,admin,admin,
3837,143934,6971,40113,7842,0,N,N,N,CP_Phys,TT_Task,DT_FixedDrtn,TK_NotStart,CZA-TK-0606-1930,"Cutting, Fit-up and Welding  of Pontoon",8506,3254,0,70,0,920.343,920.343,70,0,0,0,,,,2015-03-10 15:00,2015-03-18 15:00,,2014-02-24 11:00,2014-03-04 11:00,2014-02-24 11:00,2014-03-04 11:00,2014-02-24 11:00,2014-03-04 11:00,2015-03-10 15:00,2015-03-18 15:00,,PT_Normal,,,,,TAS7ZpitNkOQM/oyI97y0Q,OZkJcLXZhkKhCnqEco9o+g,,,N,0,0,,,2014-04-13 07:21,2014-04-15 07:43,admin,admin,
3838,143935,6971,40113,7842,0,N,N,N,CP_Phys,TT_Task,DT_FixedDrtn,TK_NotStart,CZA-TK-0606-1940,Cutting of Floating Roof Legs and Manholes,8506,3254,0,100,0,0,0,100,0,0,0,,,,2015-03-10 15:00,2015-03-22 15:00,,2014-02-24 11:00,2014-03-08 11:00,2014-02-24 11:00,2014-03-08 11:00,2014-02-24 11:00,2014-03-08 11:00,2015-03-10 15:00,2015-03-22 15:00,,PT_Normal,,,,,mM+avi6pNEu1NLasCk3s3Q,/CN6QYUX1E6woEloGd4+5A,,,N,0,0,,,2014-04-13 07:21,2014-04-15 07:43,admin,admin,
3839,143936,6971,40113,7842,0,N,N,N,CP_Phys,TT_Task,DT_FixedDrtn,TK_NotStart,CZA-TK-0606-1950,"Cutting, Fit-up and Welding of Roof Structure",8506,3254,0,50,0,848.457,848.457,50,0,0,0,,,,2015-03-11 13:00,2015-03-17 13:00,,2014-02-25 09:00,2014-03-03 09:00,2014-02-25 09:00,2014-03-03 09:00,2014-02-25 09:00,2014-03-03 09:00,2015-03-11 13:00,2015-03-17 13:00,,PT_Normal,,,,,1slmw7NSHUiL1z9PMS2Hcg,OGgtrTK6fUilITxoSDDAkQ,,,N,0,0,,,2014-04-13 07:21,2014-04-15 07:43,admin,admin,
3840,143937,6971,40113,7842,0,N,N,N,CP_Phys,TT_Task,DT_FixedDrtn,TK_NotStart,CZA-TK-0606-1960,Cutting of Roof Plates,8506,3254,0,20,0,1311.069,1311.069,20,0,0,0,,,,2015-03-17 13:00,2015-03-19 13:00,,2014-03-03 09:00,2014-03-05 09:00,2014-03-03 09:00,2014-03-05 09:00,2014-03-03 09:00,2014-03-05 09:00,2015-03-17 13:00,2015-03-19 13:00,,PT_Normal,,,,,0MdfIDixfUW8INLsVrgptw,BP5kte6npU6dsSv7CoULMg,,,N,0,0,,,2014-04-13 07:21,2014-04-15 07:43,admin,admin,
3841,143938,6971,40113,7842,0,N,N,N,CP_Phys,TT_Task,DT_FixedDrtn,TK_NotStart,CZA-TK-0606-1970,Cutting of  Compression Ring,8506,3254,0,10,0,0,0,10,0,0,0,,,,2015-03-19 13:00,2015-03-21 13:00,,2014-03-05 09:00,2014-03-06 09:00,2014-03-05 09:00,2014-03-06 09:00,2014-03-05 09:00,2014-03-06 09:00,2015-03-19 13:00,2015-03-21 13:00,,PT_Normal,,,,,0kty4k5N5k6FyTTk6pSDoA,jRwcgOIavEGdynLjMMAJDw,,,N,0,0,,,2014-04-13 07:21,2014-04-15 07:43,admin,admin,
3842,143939,6971,40113,7842,0,N,N,N,CP_Phys,TT_Task,DT_FixedDrtn,TK_NotStart,CZA-TK-0606-1980,"Cutting, Fit-up & Welding Roof Platform, Gratings and Handrails",8506,3254,0,70,0,0,0,70,0,0,0,,,,2015-03-21 13:00,2015-03-29 13:00,,2014-03-06 09:00,2014-03-15 09:00,2014-03-06 09:00,2014-03-15 09:00,2014-03-06 09:00,2014-03-15 09:00,2015-03-21 13:00,2015-03-29 13:00,,PT_Normal,,,,,F93KlikSB02x+rvm7sKaCg,uKNTxvqkhUi+Riuj9KkD9w,,,N,0,0,,,2014-04-13 07:21,2014-04-15 07:43,admin,admin,
3843,143940,6971,40113,7842,0,N,N,N,CP_Phys,TT_Task,DT_FixedDrtn,TK_NotStart,CZA-TK-0606-1990,"Cutting, Fit-up and Welding of Roof Nozzles, Manholes and Other Appurtanances",8506,3254,0,70,0,0,0,70,0,0,0,,,,2015-03-29 13:00,2015-04-06 13:00,,2014-03-15 09:00,2014-03-23 09:00,2014-03-15 09:00,2014-03-23 09:00,2014-03-15 09:00,2014-03-23 09:00,2015-03-29 13:00,2015-04-06 13:00,,PT_Normal,,,,,g/0AzvKGrUeA2pKAjHihOw,ms2fJ1G70kyEKnWMAWPTng,,,N,0,0,,,2014-04-13 07:21,2014-04-15 07:43,admin,admin,
3844,143941,6971,40113,7842,0,N,N,N,CP_Phys,TT_Task,DT_FixedDrtn,TK_NotStart,CZA-TK-0606-2000,"Cutting , Beveling & Rolling Shell No.6",8506,3254,0,10,0,360.7887,360.7887,10,0,0,0,,,,2015-04-06 13:00,2015-04-07 13:00,,2014-03-23 09:00,2014-03-24 09:00,2014-03-23 09:00,2014-03-24 09:00,2014-03-23 09:00,2014-03-24 09:00,2015-04-06 13:00,2015-04-07 13:00,,PT_Normal,,,,,bm+nBOr3o0WcXUU8iGnWuw,GEQetLGmsECp0q1tMPE+2A,,,N,0,0,,,2014-04-13 07:21,2014-04-15 07:43,admin,admin,
3845,143942,6971,40113,7842,0,N,N,N,CP_Phys,TT_Task,DT_FixedDrtn,TK_NotStart,CZA-TK-0606-2010,"Cutting , Beveling & Rolling Shell No.5",8506,3254,0,10,0,463.902,463.902,10,0,0,0,,,,2015-04-07 13:00,2015-04-08 13:00,,2014-03-24 09:00,2014-03-25 09:00,2014-03-24 09:00,2014-03-25 09:00,2014-03-24 09:00,2014-03-25 09:00,2015-04-07 13:00,2015-04-08 13:00,,PT_Normal,,,,,gKa09Sm3aEmhKZzcmql/3g,xuEqGDIBsUGAUEs9zTfC5w,,,N,0,0,,,2014-04-13 07:21,2014-04-15 07:43,admin,admin,
3846,143943,6971,40113,7842,0,N,N,N,CP_Phys,TT_Task,DT_FixedDrtn,TK_NotStart,CZA-TK-0606-2020,"Cutting , Beveling & Rolling Shell No.4",8506,3254,0,10,0,567.0336,567.0336,10,0,0,0,,,,2015-04-08 13:00,2015-04-09 13:00,,2014-03-25 09:00,2014-03-26 09:00,2014-03-25 09:00,2014-03-26 09:00,2014-03-25 09:00,2014-03-26 09:00,2015-04-08 13:00,2015-04-09 13:00,,PT_Normal,,,,,qwiuGd0tkkeJsTagxDUlYQ,J9anqcbiokGxvunnnY/3gw,,,N,0,0,,,2014-04-13 07:21,2014-04-15 07:43,admin,admin,
3847,143944,6971,40113,7842,0,N,N,N,CP_Phys,TT_Task,DT_FixedDrtn,TK_NotStart,CZA-TK-0606-2030,"Cutting , Beveling & Rolling Shell No.3",8506,3254,0,10,0,670.1742,670.1742,10,0,0,0,,,,2015-04-11 09:00,2015-04-12 09:00,,2014-03-26 15:00,2014-03-27 15:00,2014-03-26 15:00,2014-03-27 15:00,2014-03-26 15:00,2014-03-27 15:00,2015-04-11 09:00,2015-04-12 09:00,,PT_Normal,,,,,Kgg0oj7nJ0614LC32+lImg,4R/UGIk620ioHuDcDZt2bg,,,N,0,0,,,2014-04-13 07:21,2014-04-15 07:43,admin,admin,
3848,143945,6971,40113,7842,0,N,N,N,CP_Phys,TT_Task,DT_FixedDrtn,TK_NotStart,CZA-TK-0606-2040,"Cutting , Beveling & Rolling Shell No.2 & 1",8506,3254,0,10,0,1028.232,1028.232,10,0,0,0,,,,2015-04-12 09:00,2015-04-13 09:00,,2014-03-27 15:00,2014-03-29 15:00,2014-03-27 15:00,2014-03-29 15:00,2014-03-27 15:00,2014-03-29 15:00,2015-04-12 09:00,2015-04-13 09:00,,PT_Normal,,,,,DE6q/MGwwUmHbD92JHDFPQ,TJFQx6LM+kKXnOm7o7ojOQ,,,N,0,0,,,2014-04-13 07:21,2014-04-15 07:43,admin,admin,
3849,143946,6971,40113,7842,0,N,N,N,CP_Phys,TT_Task,DT_FixedDrtn,TK_NotStart,CZA-TK-0606-2290,"Cutting, Fit-up and Welding of Roof Nozzles, Manholes and Other Appurtanances",8506,3254,0,10,0,0,0,10,0,0,0,,,,2015-04-13 09:00,2015-04-14 09:00,,2014-03-29 15:00,2014-03-30 15:00,2014-03-29 15:00,2014-03-30 15:00,2014-03-29 15:00,2014-03-30 15:00,2015-04-13 09:00,2015-04-14 09:00,,PT_Normal,,,,,4IyrL7HFpUSXQZS8HTfG7Q,,,,N,0,0,,,2014-04-13 07:21,2014-04-15 07:43,admin,admin,
3850,143947,6971,40113,7842,0,N,N,N,CP_Phys,TT_Task,DT_FixedDrtn,TK_NotStart,CZA-TK-0606-2300,"Cutting, Fit-up and Weld of Stairway Platform, gratings Handrails (Upper Part)",8506,3254,1172.666667,70,0,0,0,70,0,0,0,,,,2015-04-14 15:00,2015-04-22 15:00,,2014-03-31 11:00,2014-04-08 11:00,2014-03-31 11:00,2014-04-08 11:00,2014-03-31 11:00,2014-04-08 11:00,2015-04-14 15:00,2015-04-22 15:00,,PT_Normal,,,,,aYZdJlmzNUe8aO89IB3DAQ,,,,N,0,0,,,2014-04-13 07:21,2014-04-15 07:43,admin,admin,
3851,143948,6971,40094,7842,0,N,N,N,CP_Phys,TT_Task,DT_FixedDrtn,TK_NotStart,CZA-TK-0600-1920,Tank Calibration,8397,1162,0,50,0,5,5,50,0,0,0,,,,2015-06-20 15:00,2015-06-25 15:00,,2015-02-04 13:00,2015-02-10 13:00,2015-02-04 13:00,2015-02-10 13:00,2015-02-04 13:00,2015-02-10 13:00,2015-06-20 15:00,2015-06-25 15:00,,PT_Normal,,,,,tuP2SFXWZ02cj+SUMjW9Tw,,,,N,0,0,,,2014-04-13 07:21,2014-04-14 14:41,admin,admin,
3852,143949,6971,40094,7842,0,N,N,N,CP_Phys,TT_Task,DT_FixedDrtn,TK_NotStart,CZA-TK-0600-1930,Tank Handover,8397,1162,1162,20,0,2,2,20,0,0,0,,,,2015-06-25 15:00,2015-06-28 15:00,,2015-02-10 13:00,2015-02-12 13:00,2015-02-10 13:00,2015-02-12 13:00,2015-02-10 13:00,2015-02-12 13:00,2015-06-25 15:00,2015-06-28 15:00,,PT_Normal,,,,,cwaJwzGXlkaKt6DyO/GmzQ,,,,N,0,0,,,2014-04-13 07:21,2014-04-14 14:41,admin,admin,
3853,143950,6971,40605,7842,0,N,N,N,CP_Phys,TT_Task,DT_FixedDrtn,TK_NotStart,CZA-TK-0600-1220,Laying and Fit-up,8397,982,0,20,0,2,2,20,120,0,120,,,,2014-07-23 09:00,2014-07-26 09:00,,2014-03-31 07:00,2014-04-01 17:00,2014-03-31 07:00,2014-04-01 17:00,2014-03-31 07:00,2014-04-01 17:00,2014-07-23 09:00,2014-07-26 09:00,,PT_Normal,,,,,nw0T24F1tku7tSEfDLeVqA,APBrnZlakUiOOFnlo/xcsg,,,N,0,0,,,2014-04-13 07:21,2014-04-14 14:41,admin,admin,
3854,143951,6971,40605,7842,0,N,N,N,CP_Phys,TT_Task,DT_FixedDrtn,TK_NotStart,CZA-TK-0600-1230,Welding,8397,982,0,30,0,3,3,30,120,0,120,,,,2014-07-26 09:00,2014-07-29 09:00,,2014-04-02 07:00,2014-04-05 17:00,2014-04-02 07:00,2014-04-05 17:00,2014-04-02 07:00,2014-04-05 17:00,2014-07-26 09:00,2014-07-29 09:00,,PT_Normal,,,,,ZMUnxuRbe0OlO/Hyj1ce5g,ebKLVVyBG0O0vt7xpKXLcg,,,N,0,0,,,2014-04-13 07:21,2014-04-14 14:41,admin,admin,
3855,143952,6971,40605,7842,0,N,N,N,CP_Phys,TT_Task,DT_FixedDrtn,TK_NotStart,CZA-TK-0600-1240,Inspection,8397,982,0,50,0,5,5,50,0,0,0,,,,2014-07-23 09:00,2014-07-29 09:00,,2014-03-31 07:00,2014-04-05 17:00,2014-03-31 07:00,2014-04-05 17:00,2014-03-31 07:00,2014-04-05 17:00,2014-07-23 09:00,2014-07-29 09:00,,PT_Normal,,,,,0Iw0IQR85U6WMzrU71C2Og,opH9xsjrvEePgY0h1MO6xw,,,N,0,0,,,2014-04-13 07:21,2014-04-14 14:41,admin,admin,
3856,143953,6971,40606,7842,0,N,N,N,CP_Phys,TT_Task,DT_FixedDrtn,TK_NotStart,CZA-TK-0600-1250,Laying and Fit-up,8397,982,0,40,0,4,4,40,240,0,240,,,,2014-07-29 09:00,2014-08-03 09:00,,2014-04-06 07:00,2014-04-09 17:00,2014-04-06 07:00,2014-04-09 17:00,2014-04-06 07:00,2014-04-09 17:00,2014-07-29 09:00,2014-08-03 09:00,,PT_Normal,,,,,XHI5mo4KO0mryPCJ0t8weQ,NaThPR/UckC8JBbX9bEpmw,,,N,0,0,,,2014-04-13 07:21,2014-04-14 14:41,admin,admin,
3857,143954,6971,40606,7842,0,N,N,N,CP_Phys,TT_Task,DT_FixedDrtn,TK_NotStart,CZA-TK-0600-1260,Welding,8397,982,0,150,0,15,15,150,750,0,750,,,,2014-08-03 09:00,2014-08-20 09:00,,2014-04-10 07:00,2014-04-27 17:00,2014-04-10 07:00,2014-04-27 17:00,2014-04-10 07:00,2014-04-27 17:00,2014-08-03 09:00,2014-08-20 09:00,,PT_Normal,,,,,Yko/nmeQHkaJtTOxcBZzOQ,UC7GS00JpEybhKAMaJ+NYA,,,N,0,0,,,2014-04-13 07:21,2014-04-14 14:41,admin,admin,
3858,143955,6971,40606,7842,0,N,N,N,CP_Phys,TT_Task,DT_FixedDrtn,TK_NotStart,CZA-TK-0600-1270,Inspection,8397,982,0,190,0,19,19,190,0,0,0,,,,2014-07-29 09:00,2014-08-20 09:00,,2014-04-06 07:00,2014-04-27 17:00,2014-04-06 07:00,2014-04-27 17:00,2014-04-06 07:00,2014-04-27 17:00,2014-07-29 09:00,2014-08-20 09:00,,PT_Normal,,,,,JcI3SZnACUK9lqlZVbJYBg,uiid7NVfWEOIdk4V3/PgLA,,,N,0,0,,,2014-04-13 07:21,2014-04-14 14:41,admin,admin,
3859,143956,6971,40607,7842,0,N,N,N,CP_Phys,TT_Task,DT_FixedDrtn,TK_NotStart,CZA-TK-0600-1280,Erection and Fit-up,8397,982,0,20,0,2,2,20,120,0,120,,,,2014-08-20 09:00,2014-08-23 09:00,,2014-04-28 07:00,2014-04-29 17:00,2014-04-28 07:00,2014-04-29 17:00,2014-04-28 07:00,2014-04-29 17:00,2014-08-20 09:00,2014-08-23 09:00,,PT_Normal,,,,,Wj3XUKUpckKbiZ+NYoRDFg,s1VGbFbg4kumXpRpDZG4QQ,,,N,0,0,,,2014-04-13 07:21,2014-04-14 14:41,admin,admin,
3860,143957,6971,40607,7842,0,N,N,N,CP_Phys,TT_Task,DT_FixedDrtn,TK_NotStart,CZA-TK-0600-1290,Welding,8397,982,0,60,0,6,6,60,300,0,300,,,,2014-08-23 09:00,2014-08-30 09:00,,2014-04-30 07:00,2014-05-06 17:00,2014-04-30 07:00,2014-05-06 17:00,2014-04-30 07:00,2014-05-06 17:00,2014-08-23 09:00,2014-08-30 09:00,,PT_Normal,,,,,TxFvhTar60em7T64/+WRlw,aD9E5LYB7Eym+uhG7b2AVw,,,N,0,0,,,2014-04-13 07:21,2014-04-14 14:41,admin,admin,
3861,143958,6971,40607,7842,0,N,N,N,CP_Phys,TT_Task,DT_FixedDrtn,TK_NotStart,CZA-TK-0600-1300,Inspection,8397,982,0,80,0,8,8,80,0,0,0,,,,2014-08-20 09:00,2014-08-30 09:00,,2014-04-28 07:00,2014-05-06 17:00,2014-04-28 07:00,2014-05-06 17:00,2014-04-28 07:00,2014-05-06 17:00,2014-08-20 09:00,2014-08-30 09:00,,PT_Normal,,,,,wkI+Rqto4E+THbOIcRso2g,OP+48S/ua02edhUcqG1qiw,,,N,0,0,,,2014-04-13 07:21,2014-04-14 14:41,admin,admin,
3862,143959,6971,40608,7842,0,N,N,N,CP_Phys,TT_Task,DT_FixedDrtn,TK_NotStart,CZA-TK-0600-1310,Erection and Fit-up,8397,982,0,20,0,2,2,20,120,0,120,,,,2014-08-30 09:00,2014-09-01 09:00,,2014-05-07 07:00,2014-05-08 17:00,2014-05-07 07:00,2014-05-08 17:00,2014-05-07 07:00,2014-05-08 17:00,2014-08-30 09:00,2014-09-01 09:00,,PT_Normal,,,,,SICe3oNWZU6wnyRa9fagfQ,N+T4GU6e70S39r+Y87mvYQ,,,N,0,0,,,2014-04-13 07:21,2014-04-14 14:41,admin,admin,
3863,143960,6971,40608,7842,0,N,N,N,CP_Phys,TT_Task,DT_FixedDrtn,TK_NotStart,CZA-TK-0600-1320,Welding,8397,982,0,60,0,6,6,60,300,0,300,,,,2014-09-01 09:00,2014-09-08 09:00,,2014-05-10 07:00,2014-05-15 17:00,2014-05-10 07:00,2014-05-15 17:00,2014-05-10 07:00,2014-05-15 17:00,2014-09-01 09:00,2014-09-08 09:00,,PT_Normal,,,,,TGesUGWTW0isuiP8U4VW4w,QzmzTgxQDkiRVoIBUN4QsA,,,N,0,0,,,2014-04-13 07:21,2014-04-14 14:41,admin,admin,
3864,143961,6971,40608,7842,0,N,N,N,CP_Phys,TT_Task,DT_FixedDrtn,TK_NotStart,CZA-TK-0600-1330,Inspection,8397,982,0,80,0,8,8,80,0,0,0,,,,2014-08-30 09:00,2014-09-08 09:00,,2014-05-07 07:00,2014-05-15 17:00,2014-05-07 07:00,2014-05-15 17:00,2014-05-07 07:00,2014-05-15 17:00,2014-08-30 09:00,2014-09-08 09:00,,PT_Normal,,,,,Vjb8qilroUW2+3weIF3rlg,29nmQ1Ouw02Z+zOnwp8VYw,,,N,0,0,,,2014-04-13 07:21,2014-04-14 14:41,admin,admin,
3865,143962,6971,40609,7842,0,N,N,N,CP_Phys,TT_Task,DT_FixedDrtn,TK_NotStart,CZA-TK-0600-1340,"Cutting, Installation and Fit-up",8397,982,0,20,0,2,2,20,120,0,120,,,,2014-09-08 09:00,2014-09-10 09:00,,2014-05-17 07:00,2014-05-18 17:00,2014-05-17 07:00,2014-05-18 17:00,2014-05-17 07:00,2014-05-18 17:00,2014-09-08 09:00,2014-09-10 09:00,,PT_Normal,,,,,skBPTsYP3E6tNGy9rc1S8Q,66chmx/tvUOz+2yt8bkDbg,,,N,0,0,,,2014-04-13 07:21,2014-04-14 14:41,admin,admin,
3866,143963,6971,40609,7842,0,N,N,N,CP_Phys,TT_Task,DT_FixedDrtn,TK_NotStart,CZA-TK-0600-1350,Welding,8397,982,0,50,0,5,5,50,200,0,200,,,,2014-09-10 09:00,2014-09-16 09:00,,2014-05-19 07:00,2014-05-24 17:00,2014-05-19 07:00,2014-05-24 17:00,2014-05-19 07:00,2014-05-24 17:00,2014-09-10 09:00,2014-09-16 09:00,,PT_Normal,,,,,JD8qrV2fWEmlUv6QRGLzyw,EZGVM9Pht0ajk9W8YLZlng,,,N,0,0,,,2014-04-13 07:21,2014-04-14 14:41,admin,admin,
3867,143964,6971,40609,7842,0,N,N,N,CP_Phys,TT_Task,DT_FixedDrtn,TK_NotStart,CZA-TK-0600-1360,Inspection,8397,982,0,70,0,7,7,70,0,0,0,,,,2014-09-08 09:00,2014-09-16 09:00,,2014-05-17 07:00,2014-05-24 17:00,2014-05-17 07:00,2014-05-24 17:00,2014-05-17 07:00,2014-05-24 17:00,2014-09-08 09:00,2014-09-16 09:00,,PT_Normal,,,,,SDkveoYuS0KeGQPvLp513Q,k2aF4IAF9EmsFT7863683w,,,N,0,0,,,2014-04-13 07:21,2014-04-14 14:41,admin,admin,
3868,143965,6971,40610,7842,0,N,N,N,CP_Phys,TT_Task,DT_FixedDrtn,TK_NotStart,CZA-TK-0600-1370,Erection and Fit-up,8397,982,0,20,0,2,2,20,40,0,40,,,,2014-09-13 09:00,2014-09-15 09:00,,2014-05-21 07:00,2014-05-22 17:00,2014-05-21 07:00,2014-05-22 17:00,2014-05-21 07:00,2014-05-22 17:00,2014-09-13 09:00,2014-09-15 09:00,,PT_Normal,,,,,sSjyA6psM0O8fr69Hzjzmg,QXYj7LfvlE6N9KH8cgxXaw,,,N,0,0,,,2014-04-13 07:21,2014-04-14 14:41,admin,admin,
3869,143966,6971,40610,7842,0,N,N,N,CP_Phys,TT_Task,DT_FixedDrtn,TK_NotStart,CZA-TK-0600-1380,Welding,8397,982,0,20,0,2,2,20,80,0,80,,,,2014-09-15 09:00,2014-09-17 09:00,,2014-05-24 07:00,2014-05-25 17:00,2014-05-24 07:00,2014-05-25 17:00,2014-05-24 07:00,2014-05-25 17:00,2014-09-15 09:00,2014-09-17 09:00,,PT_Normal,,,,,hEqYchJkP0GUNmAy1bayPg,jzt0x6lJe0mbYS+3N+BiUw,,,N,0,0,,,2014-04-13 07:21,2014-04-14 14:41,admin,admin,
3870,143967,6971,40610,7842,0,N,N,N,CP_Phys,TT_Task,DT_FixedDrtn,TK_NotStart,CZA-TK-0600-1390,Inspection,8397,982,0,40,0,4,4,40,0,0,0,,,,2014-09-13 09:00,2014-09-17 09:00,,2014-05-21 07:00,2014-05-25 17:00,2014-05-21 07:00,2014-05-25 17:00,2014-05-21 07:00,2014-05-25 17:00,2014-09-13 09:00,2014-09-17 09:00,,PT_Normal,,,,,uJWjn3pL6k6AL9wTxM9e4A,EdiCWkdbAUe1EuQhSBW6uw,,,N,0,0,,,2014-04-13 07:21,2014-04-14 14:41,admin,admin,
3871,143968,6971,40611,7842,0,N,N,N,CP_Phys,TT_Task,DT_FixedDrtn,TK_NotStart,CZA-TK-0600-1400,Laying and Fit-up,8397,982,0,40,0,4,4,40,240,0,240,,,,2014-09-17 09:00,2014-09-22 09:00,,2014-05-26 07:00,2014-05-29 17:00,2014-05-26 07:00,2014-05-29 17:00,2014-05-26 07:00,2014-05-29 17:00,2014-09-17 09:00,2014-09-22 09:00,,PT_Normal,,,,,d4HjruqhAUq/YEA1ohJDaA,MmJBCnbU00GMCheUZwLmSw,,,N,0,0,,,2014-04-13 07:21,2014-04-14 14:41,admin,admin,
3872,143969,6971,40611,7842,0,N,N,N,CP_Phys,TT_Task,DT_FixedDrtn,TK_NotStart,CZA-TK-0600-1410,Welding,8397,982,0,100,0,10,10,100,400,0,400,,,,2014-09-22 09:00,2014-10-04 09:00,,2014-05-31 07:00,2014-06-10 17:00,2014-05-31 07:00,2014-06-10 17:00,2014-05-31 07:00,2014-06-10 17:00,2014-09-22 09:00,2014-10-04 09:00,,PT_Normal,,,,,BvG9I1wthki6GBRex+amMg,JUum3RkuZ0mmbBNzaZlNow,,,N,0,0,,,2014-04-13 07:21,2014-04-14 14:41,admin,admin,
3873,143970,6971,40611,7842,0,N,N,N,CP_Phys,TT_Task,DT_FixedDrtn,TK_NotStart,CZA-TK-0600-1420,Inspection,8397,982,0,140,0,14,14,140,0,0,0,,,,2014-09-17 09:00,2014-10-04 09:00,,2014-05-26 07:00,2014-06-10 17:00,2014-05-26 07:00,2014-06-10 17:00,2014-05-26 07:00,2014-06-10 17:00,2014-09-17 09:00,2014-10-04 09:00,,PT_Normal,,,,,qftbREEbsEeFVd4cj47/bw,kpp4OQ3atUCtfWqCpj5jrA,,,N,0,0,,,2014-04-13 07:21,2014-04-14 14:41,admin,admin,
3874,143971,6971,40612,7842,0,N,N,N,CP_Phys,TT_Task,DT_FixedDrtn,TK_NotStart,CZA-TK-0600-1430,"Laying, Cutting all Holes and Fit-up",8397,982,0,40,0,4,4,40,80,0,80,,,,2014-10-04 09:00,2014-10-08 09:00,,2014-06-11 07:00,2014-06-15 17:00,2014-06-11 07:00,2014-06-15 17:00,2014-06-11 07:00,2014-06-15 17:00,2014-10-04 09:00,2014-10-08 09:00,,PT_Normal,,,,,7o68PkdxtU+IC64fhegz1A,+spBSdkpEUmADY/USpbNJg,,,N,0,0,,,2014-04-13 07:21,2014-04-14 14:41,admin,admin,
3875,143972,6971,40612,7842,0,N,N,N,CP_Phys,TT_Task,DT_FixedDrtn,TK_NotStart,CZA-TK-0600-1440,Welding,8397,1022,40,110,0,11,11,110,440,0,440,,,,2014-10-08 09:00,2014-10-21 09:00,,2014-06-11 07:00,2014-06-23 17:00,2014-06-11 07:00,2014-06-23 17:00,2014-06-11 07:00,2014-06-23 17:00,2014-10-08 09:00,2014-10-21 09:00,,PT_Normal,,,,,QnHgxs1FfkCjYyUnDHrLrA,UcdKdc/oB02isv9PZSAqiQ,,,N,0,0,,,2014-04-13 07:21,2014-04-14 14:41,admin,admin,
3876,143973,6971,40612,7842,0,N,N,N,CP_Phys,TT_Task,DT_FixedDrtn,TK_NotStart,CZA-TK-0600-1450,Inspection,8397,982,0,150,0,15,15,150,0,0,0,,,,2014-10-04 09:00,2014-10-21 09:00,,2014-06-11 07:00,2014-06-28 17:00,2014-06-11 07:00,2014-06-28 17:00,2014-06-11 07:00,2014-06-28 17:00,2014-10-04 09:00,2014-10-21 09:00,,PT_Normal,,,,,PrXLPvXmiEi4N8QujFd2ZA,yyeQUWAxYUKvSsmbWaICaA,,,N,0,0,,,2014-04-13 07:21,2014-04-14 14:41,admin,admin,
3877,143974,6971,40613,7842,0,N,N,N,CP_Phys,TT_Task,DT_FixedDrtn,TK_NotStart,CZA-TK-0600-1460,Erection and Fit-up,8397,982,0,50,0,5,5,50,300,0,300,,,,2014-10-21 09:00,2014-10-27 09:00,,2014-06-29 07:00,2014-07-03 17:00,2014-06-29 07:00,2014-07-03 17:00,2014-06-29 07:00,2014-07-03 17:00,2014-10-21 09:00,2014-10-27 09:00,,PT_Normal,,,,,rIJTjShm1U+ZO6HfCm3uIQ,GsQqOaD+sU+3jTAkJHY3yA,,,N,0,0,,,2014-04-13 07:21,2014-04-14 14:41,admin,admin,
3878,143975,6971,40613,7842,0,N,N,N,CP_Phys,TT_Task,DT_FixedDrtn,TK_NotStart,CZA-TK-0600-1470,Welding,8397,982,0,90,0,9,9,90,360,0,360,,,,2014-10-27 09:00,2014-11-06 09:00,,2014-07-05 07:00,2014-07-14 17:00,2014-07-05 07:00,2014-07-14 17:00,2014-07-05 07:00,2014-07-14 17:00,2014-10-27 09:00,2014-11-06 09:00,,PT_Normal,,,,,VExlymtF9kqkqGTK8BDfOQ,oh6dnx5aMEScOGQiTrHOwg,,,N,0,0,,,2014-04-13 07:21,2014-04-14 14:41,admin,admin,
3879,143976,6971,40613,7842,0,N,N,N,CP_Phys,TT_Task,DT_FixedDrtn,TK_NotStart,CZA-TK-0600-1480,Inspection,8397,982,0,140,0,14,14,140,0,0,0,,,,2014-10-21 09:00,2014-11-06 09:00,,2014-06-29 07:00,2014-07-14 17:00,2014-06-29 07:00,2014-07-14 17:00,2014-06-29 07:00,2014-07-14 17:00,2014-10-21 09:00,2014-11-06 09:00,,PT_Normal,,,,,HpADkBrtGU6+ncTvyfcXxQ,woXvYYdW60OQ7Nt3b1NPqw,,,N,0,0,,,2014-04-13 07:21,2014-04-14 14:41,admin,admin,
3880,143977,6971,40614,7842,0,N,N,N,CP_Phys,TT_Task,DT_FixedDrtn,TK_NotStart,CZA-TK-0600-1490,Laying and Fit-up,8397,982,0,20,0,2,2,20,120,0,120,,,,2014-11-06 09:00,2014-11-09 09:00,,2014-07-15 07:00,2014-07-16 17:00,2014-07-15 07:00,2014-07-16 17:00,2014-07-15 07:00,2014-07-16 17:00,2014-11-06 09:00,2014-11-09 09:00,,PT_Normal,,,,,FyYI8enb2EyFo35Yqe1lEw,pgKLvw+lN0eVJH6BhH2gmQ,,,N,0,0,,,2014-04-13 07:21,2014-04-14 14:41,admin,admin,
3881,143978,6971,40614,7842,0,N,N,N,CP_Phys,TT_Task,DT_FixedDrtn,TK_NotStart,CZA-TK-0600-1500,Welding,8397,982,0,60,0,6,6,60,240,0,240,,,,2014-11-09 09:00,2014-11-16 09:00,,2014-07-17 07:00,2014-07-23 17:00,2014-07-17 07:00,2014-07-23 17:00,2014-07-17 07:00,2014-07-23 17:00,2014-11-09 09:00,2014-11-16 09:00,,PT_Normal,,,,,jTv2/HpeTkyYOdYwvFZLCg,afO1cP76JkK9nk/OPLwFXw,,,N,0,0,,,2014-04-13 07:21,2014-04-14 14:41,admin,admin,
3882,143979,6971,40614,7842,0,N,N,N,CP_Phys,TT_Task,DT_FixedDrtn,TK_NotStart,CZA-TK-0600-1510,Inspection,8397,982,0,80,0,8,8,80,0,0,0,,,,2014-11-06 09:00,2014-11-16 09:00,,2014-07-15 07:00,2014-07-23 17:00,2014-07-15 07:00,2014-07-23 17:00,2014-07-15 07:00,2014-07-23 17:00,2014-11-06 09:00,2014-11-16 09:00,,PT_Normal,,,,,BbHS4fdHsU23ut1JXE5HVA,FFh8JojIZkGgV6EvDFZeaw,,,N,0,0,,,2014-04-13 07:21,2014-04-14 14:41,admin,admin,
3883,143980,6971,40615,7842,0,N,N,N,CP_Phys,TT_Task,DT_FixedDrtn,TK_NotStart,CZA-TK-0600-1520,Laying and Fit-up,8397,982,0,30,0,3,3,30,180,0,180,,,,2014-11-16 09:00,2014-11-19 09:00,,2014-07-24 07:00,2014-07-27 17:00,2014-07-24 07:00,2014-07-27 17:00,2014-07-24 07:00,2014-07-27 17:00,2014-11-16 09:00,2014-11-19 09:00,,PT_Normal,,,,,+x6Kvcq5jEiOzD+CWAPriw,eMVqDNV8uUG2rCs2h5Kmlw,,,N,0,0,,,2014-04-13 07:21,2014-04-14 14:41,admin,admin,
3884,143981,6971,40615,7842,0,N,N,N,CP_Phys,TT_Task,DT_FixedDrtn,TK_NotStart,CZA-TK-0600-1530,Welding,8397,982,0,70,0,7,7,70,280,0,280,,,,2014-11-19 09:00,2014-11-27 09:00,,2014-07-28 07:00,2014-08-04 17:00,2014-07-28 07:00,2014-08-04 17:00,2014-07-28 07:00,2014-08-04 17:00,2014-11-19 09:00,2014-11-27 09:00,,PT_Normal,,,,,+yPi7kdxPE+cISc58199jw,jc1Peshl9UKwWZXKw6VKuw,,,N,0,0,,,2014-04-13 07:21,2014-04-14 14:41,admin,admin,
3885,143982,6971,40615,7842,0,N,N,N,CP_Phys,TT_Task,DT_FixedDrtn,TK_NotStart,CZA-TK-0600-1540,Inspection,8397,982,0,100,0,10,10,100,0,0,0,,,,2014-11-16 09:00,2014-11-27 09:00,,2014-07-24 07:00,2014-08-04 17:00,2014-07-24 07:00,2014-08-04 17:00,2014-07-24 07:00,2014-08-04 17:00,2014-11-16 09:00,2014-11-27 09:00,,PT_Normal,,,,,PTC6qOnppEOKToucmmTKvQ,qC+TF1W44EmkktNeHqHp3g,,,N,0,0,,,2014-04-13 07:21,2014-04-14 14:41,admin,admin,
3886,143983,6971,40616,7842,0,N,N,N,CP_Phys,TT_Task,DT_FixedDrtn,TK_NotStart,CZA-TK-0600-1550,"Cutting,lnstallation and Fit-up",8397,982,0,20,0,2,2,20,120,0,120,,,,2014-11-27 09:00,2014-11-30 09:00,,2014-08-05 07:00,2014-08-06 17:00,2014-08-05 07:00,2014-08-06 17:00,2014-08-05 07:00,2014-08-06 17:00,2014-11-27 09:00,2014-11-30 09:00,,PT_Normal,,,,,mu6NecRHGUabYCLPVEWXHg,NkyUWRyapESENf/0pWF8rA,,,N,0,0,,,2014-04-13 07:21,2014-04-14 14:41,admin,admin,
3887,143984,6971,40616,7842,0,N,N,N,CP_Phys,TT_Task,DT_FixedDrtn,TK_NotStart,CZA-TK-0600-1560,Welding,8397,982,0,50,0,5,5,50,200,0,200,,,,2014-11-30 09:00,2014-12-06 09:00,,2014-08-07 07:00,2014-08-12 17:00,2014-08-07 07:00,2014-08-12 17:00,2014-08-07 07:00,2014-08-12 17:00,2014-11-30 09:00,2014-12-06 09:00,,PT_Normal,,,,,QeaslOGm10emI/X6LcilFg,2BMSbTFwqEihDPlYhH6CYw,,,N,0,0,,,2014-04-13 07:21,2014-04-14 14:41,admin,admin,
3888,143985,6971,40616,7842,0,N,N,N,CP_Phys,TT_Task,DT_FixedDrtn,TK_NotStart,CZA-TK-0600-1570,Inspection,8397,982,0,70,0,7,7,70,0,0,0,,,,2014-11-27 09:00,2014-12-06 09:00,,2014-08-05 07:00,2014-08-12 17:00,2014-08-05 07:00,2014-08-12 17:00,2014-08-05 07:00,2014-08-12 17:00,2014-11-27 09:00,2014-12-06 09:00,,PT_Normal,,,,,8uSZiM9OrEi8njCRUXgspQ,SyAt9+7MpkK6egAJhAaCyQ,,,N,0,0,,,2014-04-13 07:21,2014-04-14 14:41,admin,admin,
3889,143986,6971,40617,7842,0,N,N,N,CP_Phys,TT_Task,DT_FixedDrtn,TK_NotStart,CZA-TK-0600-1580,Erection and Fit-up,8397,982,0,30,0,3,3,30,180,0,180,,,,2014-12-06 09:00,2014-12-09 09:00,,2014-08-13 07:00,2014-08-16 17:00,2014-08-13 07:00,2014-08-16 17:00,2014-08-13 07:00,2014-08-16 17:00,2014-12-06 09:00,2014-12-09 09:00,,PT_Normal,,,,,6CPKlCHC1kqXQPpS5VFijQ,6g23uOSGSE6Bg2rU4OgXpw,,,N,0,0,,,2014-04-13 07:21,2014-04-14 14:41,admin,admin,
3890,143987,6971,40617,7842,0,N,N,N,CP_Phys,TT_Task,DT_FixedDrtn,TK_NotStart,CZA-TK-0600-1590,Welding,8397,982,0,70,0,7,7,70,280,0,280,,,,2014-12-09 09:00,2014-12-17 09:00,,2014-08-17 07:00,2014-08-24 17:00,2014-08-17 07:00,2014-08-24 17:00,2014-08-17 07:00,2014-08-24 17:00,2014-12-09 09:00,2014-12-17 09:00,,PT_Normal,,,,,jzINgeucYESa+VEBtb3kxw,WpnWpwe8JEqjelrZRtYOSQ,,,N,0,0,,,2014-04-13 07:21,2014-04-14 14:41,admin,admin,
3891,143988,6971,40617,7842,0,N,N,N,CP_Phys,TT_Task,DT_FixedDrtn,TK_NotStart,CZA-TK-0600-1600,Inspection,8397,982,0,100,0,10,10,100,0,0,0,,,,2014-12-06 09:00,2014-12-17 09:00,,2014-08-13 07:00,2014-08-24 17:00,2014-08-13 07:00,2014-08-24 17:00,2014-08-13 07:00,2014-08-24 17:00,2014-12-06 09:00,2014-12-17 09:00,,PT_Normal,,,,,bH+hXh3k3EabSZ2RE5nSTw,4JPXl9AhLkCDLFAWpvo48w,,,N,0,0,,,2014-04-13 07:21,2014-04-14 14:41,admin,admin,
3892,143989,6971,40618,7842,0,N,N,N,CP_Phys,TT_Task,DT_FixedDrtn,TK_NotStart,CZA-TK-0600-1610,"Jacking, Erection and Fit-up",8397,982,0,20,0,2,2,20,120,0,120,,,,2014-12-17 09:00,2014-12-20 09:00,,2014-08-25 07:00,2014-08-26 17:00,2014-08-25 07:00,2014-08-26 17:00,2014-08-25 07:00,2014-08-26 17:00,2014-12-17 09:00,2014-12-20 09:00,,PT_Normal,,,,,9vJr8hemc06vBGqaQSvyTw,plJdZAH49kanlSRbM9LH8Q,,,N,0,0,,,2014-04-13 07:21,2014-04-14 14:41,admin,admin,
3893,143990,6971,40618,7842,0,N,N,N,CP_Phys,TT_Task,DT_FixedDrtn,TK_NotStart,CZA-TK-0600-1620,Welding,8397,982,0,60,0,6,6,60,300,0,300,,,,2014-12-20 09:00,2014-12-27 09:00,,2014-08-27 07:00,2014-09-02 17:00,2014-08-27 07:00,2014-09-02 17:00,2014-08-27 07:00,2014-09-02 17:00,2014-12-20 09:00,2014-12-27 09:00,,PT_Normal,,,,,EU9OTAeZ10y85lkwpdBz3Q,az1NcC3nO02DQCPFrzoBqg,,,N,0,0,,,2014-04-13 07:21,2014-04-14 14:41,admin,admin,
3894,143991,6971,40618,7842,0,N,N,N,CP_Phys,TT_Task,DT_FixedDrtn,TK_NotStart,CZA-TK-0600-1630,Inspection,8397,982,0,80,0,8,8,80,0,0,0,,,,2014-12-17 09:00,2014-12-27 09:00,,2014-08-25 07:00,2014-09-02 17:00,2014-08-25 07:00,2014-09-02 17:00,2014-08-25 07:00,2014-09-02 17:00,2014-12-17 09:00,2014-12-27 09:00,,PT_Normal,,,,,qQGZdughMUeGkBsCEr740g,1g4DcC3l/UOMNTX0zTUuPQ,,,N,0,0,,,2014-04-13 07:21,2014-04-14 14:41,admin,admin,
3895,143992,6971,40619,7842,0,N,N,N,CP_Phys,TT_Task,DT_FixedDrtn,TK_NotStart,CZA-TK-0600-1640,"Jacking,Erection and Fit-up",8397,982,0,20,0,2,2,20,120,0,120,,,,2014-12-27 09:00,2014-12-29 09:00,,2014-09-03 07:00,2014-09-04 17:00,2014-09-03 07:00,2014-09-04 17:00,2014-09-03 07:00,2014-09-04 17:00,2014-12-27 09:00,2014-12-29 09:00,,PT_Normal,,,,,i1478Jztdku9xXG10kfO8w,doEJA0rE7kaEhd0r5ZNs4A,,,N,0,0,,,2014-04-13 07:21,2014-04-14 14:41,admin,admin,
3896,143993,6971,40619,7842,0,N,N,N,CP_Phys,TT_Task,DT_FixedDrtn,TK_NotStart,CZA-TK-0600-1650,Welding,8397,982,0,60,0,6,6,60,300,0,300,,,,2014-12-29 09:00,2015-01-05 09:00,,2014-09-06 07:00,2014-09-11 17:00,2014-09-06 07:00,2014-09-11 17:00,2014-09-06 07:00,2014-09-11 17:00,2014-12-29 09:00,2015-01-05 09:00,,PT_Normal,,,,,/TfOG269cU6nuhOm7Dafjw,QwysOlYnSUiue0ToUPEWdA,,,N,0,0,,,2014-04-13 07:21,2014-04-14 14:41,admin,admin,
3897,143994,6971,40619,7842,0,N,N,N,CP_Phys,TT_Task,DT_FixedDrtn,TK_NotStart,CZA-TK-0600-1660,Inspection,8397,982,0,80,0,8,8,80,0,0,0,,,,2014-12-27 09:00,2015-01-05 09:00,,2014-09-03 07:00,2014-09-11 17:00,2014-09-03 07:00,2014-09-11 17:00,2014-09-03 07:00,2014-09-11 17:00,2014-12-27 09:00,2015-01-05 09:00,,PT_Normal,,,,,vlS2NIzmCUqgFEBb1WGULg,zWgGVPCjE0SjgTDkccCc1A,,,N,0,0,,,2014-04-13 07:21,2014-04-14 14:41,admin,admin,
3898,143995,6971,40620,7842,0,N,N,N,CP_Phys,TT_Task,DT_FixedDrtn,TK_NotStart,CZA-TK-0600-1670,"Jacking,Erection and Fit-up",8397,982,0,20,0,2,2,20,120,0,120,,,,2015-01-05 09:00,2015-01-07 09:00,,2014-09-13 07:00,2014-09-14 17:00,2014-09-13 07:00,2014-09-14 17:00,2014-09-13 07:00,2014-09-14 17:00,2015-01-05 09:00,2015-01-07 09:00,,PT_Normal,,,,,TyuKO0N3TEezP4gmKfwZbw,MYB5DjD2YUK0NUBKBDDbBg,,,N,0,0,,,2014-04-13 07:21,2014-04-14 14:41,admin,admin,
3899,143996,6971,40620,7842,0,N,N,N,CP_Phys,TT_Task,DT_FixedDrtn,TK_NotStart,CZA-TK-0600-1680,Welding,8397,982,0,60,0,6,6,60,300,0,300,,,,2015-01-07 09:00,2015-01-14 09:00,,2014-09-15 07:00,2014-09-21 17:00,2014-09-15 07:00,2014-09-21 17:00,2014-09-15 07:00,2014-09-21 17:00,2015-01-07 09:00,2015-01-14 09:00,,PT_Normal,,,,,OlMpYNkEBkeKYLfEbqHd5g,5hOzE60t10+0McOEEuTE8w,,,N,0,0,,,2014-04-13 07:21,2014-04-14 14:41,admin,admin,
3900,143997,6971,40620,7842,0,N,N,N,CP_Phys,TT_Task,DT_FixedDrtn,TK_NotStart,CZA-TK-0600-1690,Inspection,8397,982,0,80,0,8,8,80,0,0,0,,,,2015-01-05 09:00,2015-01-14 09:00,,2014-09-13 07:00,2014-09-21 17:00,2014-09-13 07:00,2014-09-21 17:00,2014-09-13 07:00,2014-09-21 17:00,2015-01-05 09:00,2015-01-14 09:00,,PT_Normal,,,,,JkIzWlu2G0ya+DkK1lqMgA,c/MjBw5NUUe8ylddLbFoyQ,,,N,0,0,,,2014-04-13 07:21,2014-04-14 14:41,admin,admin,
3901,143998,6971,40621,7842,0,N,N,N,CP_Phys,TT_Task,DT_FixedDrtn,TK_NotStart,CZA-TK-0600-1700,"Jacking, Erection and Fit-up",8397,982,0,20,0,2,2,20,120,0,120,,,,2015-01-14 09:00,2015-01-17 09:00,,2014-09-22 07:00,2014-09-23 17:00,2014-09-22 07:00,2014-09-23 17:00,2014-09-22 07:00,2014-09-23 17:00,2015-01-14 09:00,2015-01-17 09:00,,PT_Normal,,,,,FFHiEBRy60qRnTuDr9E5MA,EGaKYKtHTEaDeQYMObPS0A,,,N,0,0,,,2014-04-13 07:21,2014-04-14 14:41,admin,admin,
3902,143999,6971,40621,7842,0,N,N,N,CP_Phys,TT_Task,DT_FixedDrtn,TK_NotStart,CZA-TK-0600-1710,Welding,8397,982,0,60,0,6,6,60,300,0,300,,,,2015-01-17 09:00,2015-01-24 09:00,,2014-09-24 07:00,2014-09-30 17:00,2014-09-24 07:00,2014-09-30 17:00,2014-09-24 07:00,2014-09-30 17:00,2015-01-17 09:00,2015-01-24 09:00,,PT_Normal,,,,,Gaftkzclqk2mZmtrpcbQOw,XSoktqThqki3fb4PKrWKtw,,,N,0,0,,,2014-04-13 07:21,2014-04-14 14:41,admin,admin,
3903,144000,6971,40621,7842,0,N,N,N,CP_Phys,TT_Task,DT_FixedDrtn,TK_NotStart,CZA-TK-0600-1720,Inspection,8397,982,0,80,0,8,8,80,0,0,0,,,,2015-01-14 09:00,2015-01-24 09:00,,2014-09-22 07:00,2014-09-30 17:00,2014-09-22 07:00,2014-09-30 17:00,2014-09-22 07:00,2014-09-30 17:00,2015-01-14 09:00,2015-01-24 09:00,,PT_Normal,,,,,0O2M4mVAy0eSgjv96vcw8Q,EaeaTT2qsE+1Ex8WFMtT6A,,,N,0,0,,,2014-04-13 07:21,2014-04-14 14:41,admin,admin,
3904,144001,6971,40622,7842,0,N,N,N,CP_Phys,TT_Task,DT_FixedDrtn,TK_NotStart,CZA-TK-0600-1730,"Jacking, Erection and Fit-up",8397,982,0,20,0,2,2,20,120,0,120,,,,2015-01-24 09:00,2015-01-26 09:00,,2014-10-01 07:00,2014-10-02 17:00,2014-10-01 07:00,2014-10-02 17:00,2014-10-01 07:00,2014-10-02 17:00,2015-01-24 09:00,2015-01-26 09:00,,PT_Normal,,,,,IaJ8B0AJKkaPOZvQZbjInw,b5e4XQmMSk+uVZXg4z+urQ,,,N,0,0,,,2014-04-13 07:21,2014-04-14 14:41,admin,admin,
3905,144002,6971,40622,7842,0,N,N,N,CP_Phys,TT_Task,DT_FixedDrtn,TK_NotStart,CZA-TK-0600-1740,Welding,8397,982,0,60,0,6,6,60,300,0,300,,,,2015-01-26 09:00,2015-02-02 09:00,,2014-10-04 07:00,2014-10-09 17:00,2014-10-04 07:00,2014-10-09 17:00,2014-10-04 07:00,2014-10-09 17:00,2015-01-26 09:00,2015-02-02 09:00,,PT_Normal,,,,,WM0tqrYaT0aqnaa7kH+m2w,HO63DHbw7UaftCLiI1wC7w,,,N,0,0,,,2014-04-13 07:21,2014-04-14 14:41,admin,admin,
3906,144003,6971,40622,7842,0,N,N,N,CP_Phys,TT_Task,DT_FixedDrtn,TK_NotStart,CZA-TK-0600-1750,Inspection,8397,982,0,80,0,8,8,80,0,0,0,,,,2015-01-24 09:00,2015-02-02 09:00,,2014-10-01 07:00,2014-10-09 17:00,2014-10-01 07:00,2014-10-09 17:00,2014-10-01 07:00,2014-10-09 17:00,2015-01-24 09:00,2015-02-02 09:00,,PT_Normal,,,,,e2IGWsUDkUi2aOQeE2B2bQ,umnIptkOI0yoUrGUQ6edJA,,,N,0,0,,,2014-04-13 07:21,2014-04-14 14:41,admin,admin,
3907,144004,6971,40623,7842,0,N,N,N,CP_Phys,TT_Task,DT_FixedDrtn,TK_NotStart,CZA-TK-0600-1760,"Jacking, Erection and Fit-up",8397,982,0,20,0,2,2,20,120,0,120,,,,2015-02-02 09:00,2015-02-04 09:00,,2014-10-11 07:00,2014-10-12 17:00,2014-10-11 07:00,2014-10-12 17:00,2014-10-11 07:00,2014-10-12 17:00,2015-02-02 09:00,2015-02-04 09:00,,PT_Normal,,,,,LYeqHeqq6kmOdBjq+FE1wQ,8drcvPKVIUy16XezlpVQcw,,,N,0,0,,,2014-04-13 07:21,2014-04-14 14:41,admin,admin,
3908,144005,6971,40623,7842,0,N,N,N,CP_Phys,TT_Task,DT_FixedDrtn,TK_NotStart,CZA-TK-0600-1770,Welding,8397,982,0,60,0,6,6,60,300,0,300,,,,2015-02-04 09:00,2015-02-11 09:00,,2014-10-13 07:00,2014-10-19 17:00,2014-10-13 07:00,2014-10-19 17:00,2014-10-13 07:00,2014-10-19 17:00,2015-02-04 09:00,2015-02-11 09:00,,PT_Normal,,,,,5fw7lO6Z0USQf1Wyzy6+hw,w/rK6qyZk0287fjbBMFmhg,,,N,0,0,,,2014-04-13 07:21,2014-04-14 14:41,admin,admin,
3909,144006,6971,40623,7842,0,N,N,N,CP_Phys,TT_Task,DT_FixedDrtn,TK_NotStart,CZA-TK-0600-1780,Inspection,8397,982,0,80,0,8,8,80,0,0,0,,,,2015-02-02 09:00,2015-02-11 09:00,,2014-10-11 07:00,2014-10-19 17:00,2014-10-11 07:00,2014-10-19 17:00,2014-10-11 07:00,2014-10-19 17:00,2015-02-02 09:00,2015-02-11 09:00,,PT_Normal,,,,,BaEF6tfty0KXv0/dttUN7Q,+12geqy90EiFQ99Bug+nog,,,N,0,0,,,2014-04-13 07:21,2014-04-14 14:41,admin,admin,
3910,144007,6971,40624,7842,0,N,N,N,CP_Phys,TT_Task,DT_FixedDrtn,TK_NotStart,CZA-TK-0600-1790,"Jacking, Erection and Fit-up",8397,982,0,20,0,2,2,20,120,0,120,,,,2015-02-11 09:00,2015-02-14 09:00,,2014-10-20 07:00,2014-10-21 17:00,2014-10-20 07:00,2014-10-21 17:00,2014-10-20 07:00,2014-10-21 17:00,2015-02-11 09:00,2015-02-14 09:00,,PT_Normal,,,,,zNw8pmVNJ0+BTwvhFacIIQ,qmHP5pXTYEmcFOJkt5WODA,,,N,0,0,,,2014-04-13 07:21,2014-04-14 14:41,admin,admin,
3911,144008,6971,40624,7842,0,N,N,N,CP_Phys,TT_Task,DT_FixedDrtn,TK_NotStart,CZA-TK-0600-1800,Welding,8397,982,0,60,0,6,6,60,300,0,300,,,,2015-02-14 09:00,2015-02-21 09:00,,2014-10-22 07:00,2014-10-28 17:00,2014-10-22 07:00,2014-10-28 17:00,2014-10-22 07:00,2014-10-28 17:00,2015-02-14 09:00,2015-02-21 09:00,,PT_Normal,,,,,LuJwr99l/EmhUEg6fqsicg,BK+hVaMzJ0u9hVMsPFiwxA,,,N,0,0,,,2014-04-13 07:21,2014-04-14 14:41,admin,admin,
3912,144009,6971,40624,7842,0,N,N,N,CP_Phys,TT_Task,DT_FixedDrtn,TK_NotStart,CZA-TK-0600-1810,Inspection,8397,982,0,80,0,8,8,80,0,0,0,,,,2015-02-11 09:00,2015-02-21 09:00,,2014-10-20 07:00,2014-10-28 17:00,2014-10-20 07:00,2014-10-28 17:00,2014-10-20 07:00,2014-10-28 17:00,2015-02-11 09:00,2015-02-21 09:00,,PT_Normal,,,,,ykH3LQcIgEKOUyt9Lt7T2A,ezx9LqofDUeMkn2BZNj4oQ,,,N,0,0,,,2014-04-13 07:21,2014-04-14 14:41,admin,admin,
3913,144010,6971,40625,7842,0,N,N,N,CP_Phys,TT_Task,DT_FixedDrtn,TK_NotStart,CZA-TK-0600-1820,"Lay-out, Cutting, and Fit-up",8397,982,0,20,0,2,2,20,120,0,120,,,,2015-02-21 09:00,2015-02-23 09:00,,2014-10-29 07:00,2014-10-30 17:00,2014-10-29 07:00,2014-10-30 17:00,2014-10-29 07:00,2014-10-30 17:00,2015-02-21 09:00,2015-02-23 09:00,,PT_Normal,,,,,dLjJgdvQlU+Gq61/hAiOJQ,PJuJDuuRd0KzmdFZn0EfVQ,,,N,0,0,,,2014-04-13 07:21,2014-04-14 14:41,admin,admin,
3914,144011,6971,40625,7842,0,N,N,N,CP_Phys,TT_Task,DT_FixedDrtn,TK_NotStart,CZA-TK-0600-1830,Welding,8397,982,0,50,0,5,5,50,200,0,200,,,,2015-02-23 09:00,2015-03-01 09:00,,2014-11-01 07:00,2014-11-05 17:00,2014-11-01 07:00,2014-11-05 17:00,2014-11-01 07:00,2014-11-05 17:00,2015-02-23 09:00,2015-03-01 09:00,,PT_Normal,,,,,25iikmrmq0ilM1/WMQjPQQ,siN3ICwaoUCTbhwV1Brjgw,,,N,0,0,,,2014-04-13 07:21,2014-04-14 14:41,admin,admin,
3915,144012,6971,40625,7842,0,N,N,N,CP_Phys,TT_Task,DT_FixedDrtn,TK_NotStart,CZA-TK-0600-1840,Inspection,8397,982,0,70,0,7,7,70,0,0,0,,,,2015-02-21 09:00,2015-03-01 09:00,,2014-10-29 07:00,2014-11-05 17:00,2014-10-29 07:00,2014-11-05 17:00,2014-10-29 07:00,2014-11-05 17:00,2015-02-21 09:00,2015-03-01 09:00,,PT_Normal,,,,,hg1RMGBgoUGM8yw90IbY1A,ZU4OtQpFokmEqxtm0s8oZA,,,N,0,0,,,2014-04-13 07:21,2014-04-14 14:41,admin,admin,
3916,144013,6971,40626,7842,0,N,N,N,CP_Phys,TT_Task,DT_FixedDrtn,TK_NotStart,CZA-TK-0600-1850,Erection and Fit-up,8397,982,0,30,0,3,3,30,150,0,150,,,,2015-02-22 15:00,2015-02-25 15:00,,2014-10-30 13:00,2014-11-03 13:00,2014-10-30 13:00,2014-11-03 13:00,2014-10-30 13:00,2014-11-03 13:00,2015-02-22 15:00,2015-02-25 15:00,,PT_Normal,,,,,I17DLTugykSKD+v7A6xgEQ,jLRDOUWEDkOX/n4Au1yD0w,,,N,0,0,,,2014-04-13 07:21,2014-04-14 14:41,admin,admin,
3917,144014,6971,40626,7842,0,N,N,N,CP_Phys,TT_Task,DT_FixedDrtn,TK_NotStart,CZA-TK-0600-1860,Welding,8397,982,0,70,0,7,7,70,280,0,280,,,,2015-02-25 15:00,2015-03-05 15:00,,2014-11-03 13:00,2014-11-11 13:00,2014-11-03 13:00,2014-11-11 13:00,2014-11-03 13:00,2014-11-11 13:00,2015-02-25 15:00,2015-03-05 15:00,,PT_Normal,,,,,dw2iLnsCcEG/aVQ3smBwUQ,Ir/egi4cGk+gdZx7hWptdw,,,N,0,0,,,2014-04-13 07:21,2014-04-14 14:41,admin,admin,
3918,144015,6971,40626,7842,0,N,N,N,CP_Phys,TT_Task,DT_FixedDrtn,TK_NotStart,CZA-TK-0600-1870,Inspection,8397,982,0,100,0,10,10,100,0,0,0,,,,2015-02-22 15:00,2015-03-05 15:00,,2014-10-30 13:00,2014-11-11 13:00,2014-10-30 13:00,2014-11-11 13:00,2014-10-30 13:00,2014-11-11 13:00,2015-02-22 15:00,2015-03-05 15:00,,PT_Normal,,,,,Dhjnr47f3E2s4CVNDB01Sw,bs+j6z4oFEqYpXYFqrZGjg,,,N,0,0,,,2014-04-13 07:21,2014-04-14 14:41,admin,admin,
3919,144016,6971,40627,7842,0,N,N,N,CP_Phys,TT_Task,DT_FixedDrtn,TK_NotStart,CZA-TK-0600-1880,Installation of Primary and Secondary Seal,8397,982,0,60,0,6,6,60,0,0,0,,,,2015-03-05 15:00,2015-03-12 15:00,,2014-11-11 13:00,2014-11-18 13:00,2014-11-11 13:00,2014-11-18 13:00,2014-11-11 13:00,2014-11-18 13:00,2015-03-05 15:00,2015-03-12 15:00,,PT_Normal,,,,,hirxpdbzwUWtHhbqSgQcNA,Vkv+tJ0VYUW2BcM33uavyw,,,N,0,0,,,2014-04-13 07:21,2014-04-14 14:41,admin,admin,
3920,144017,6971,40627,7842,0,N,N,N,CP_Phys,TT_Task,DT_FixedDrtn,TK_NotStart,CZA-TK-0600-1890,Inspection,8397,982,0,10,0,1,1,10,0,0,0,,,,2015-03-12 15:00,2015-03-14 15:00,,2014-11-18 13:00,2014-11-19 13:00,2014-11-18 13:00,2014-11-19 13:00,2014-11-18 13:00,2014-11-19 13:00,2015-03-12 15:00,2015-03-14 15:00,,PT_Normal,,,,,n0bYQE5XoESxTbVdmK3mrg,wzvWA7fc+Ee92Gir5irpeA,,,N,0,0,,,2014-04-13 07:21,2014-04-14 14:41,admin,admin,
3921,144018,6971,40001,7842,0,N,N,N,CP_Phys,TT_Task,DT_FixedDrtn,TK_NotStart,CZA-TK-0600-1000,Cutting of Annular Plates,8502,2906,0,50,0,439.2,439.2,50,0,0,0,,,,2014-12-16 13:00,2014-12-22 13:00,,2014-01-12 07:00,2014-01-16 17:00,2014-01-12 07:00,2014-01-16 17:00,2014-01-12 07:00,2014-01-16 17:00,2014-12-16 13:00,2014-12-22 13:00,,PT_Normal,,,,,PM6zJWtsrkq2j66WFv2yqw,,,,N,0,0,,,2014-04-13 07:21,2014-04-14 17:03,admin,admin,
3922,144019,6971,40001,7842,0,N,N,N,CP_Phys,TT_Task,DT_FixedDrtn,TK_NotStart,CZA-TK-0600-1010,Cutting of Bottom Plates,8502,2906,0,50,0,1953.798,1953.798,50,0,0,0,,,,2014-12-16 13:00,2014-12-22 13:00,,2014-01-12 07:00,2014-01-16 17:00,2014-01-12 07:00,2014-01-16 17:00,2014-01-12 07:00,2014-01-16 17:00,2014-12-16 13:00,2014-12-22 13:00,,PT_Normal,,,,,GZ2JQY4CSUmexDsTfc3WBw,,,,N,0,0,,,2014-04-13 07:21,2014-04-14 17:03,admin,admin,
3923,144020,6971,40001,7842,0,N,N,N,CP_Phys,TT_Task,DT_FixedDrtn,TK_NotStart,CZA-TK-0600-1020,"Cutting,Bevelling & Rolling Shell No.8",8502,2906,0,20,0,1950.3981,1950.3981,20,0,0,0,,,,2014-12-18 09:00,2014-12-21 09:00,,2014-01-13 13:00,2014-01-15 13:00,2014-01-13 13:00,2014-01-15 13:00,2014-01-13 13:00,2014-01-15 13:00,2014-12-18 09:00,2014-12-21 09:00,,PT_Normal,,,,,jl8kAIYSW0mW239ZLrtmcA,,,,N,0,0,,,2014-04-13 07:21,2014-04-14 17:03,admin,admin,
3924,144021,6971,40001,7842,0,N,N,N,CP_Phys,TT_Task,DT_FixedDrtn,TK_NotStart,CZA-TK-0600-1030,"Cutting,Bevelling & Rolling Shell No.9",8502,2906,0,20,0,1075.8609,1075.8609,20,0,0,0,,,,2014-12-20 07:00,2014-12-21 17:00,,2014-01-14 11:00,2014-01-16 11:00,2014-01-14 11:00,2014-01-16 11:00,2014-01-14 11:00,2014-01-16 11:00,2014-12-20 07:00,2014-12-21 17:00,,PT_Normal,,,,,ysTrZDdqtkaliN2oz5WV4g,,,,N,0,0,,,2014-04-13 07:21,2014-04-14 17:03,admin,admin,
3925,144022,6971,40001,7842,0,N,N,N,CP_Phys,TT_Task,DT_FixedDrtn,TK_NotStart,CZA-TK-0600-1050,Cutting of Pontoon,8502,2906,0,140,0,1161.54,1161.54,140,0,0,0,,,,2014-12-22 15:00,2015-01-07 15:00,,2014-01-18 09:00,2014-02-03 09:00,2014-01-18 09:00,2014-02-03 09:00,2014-01-18 09:00,2014-02-03 09:00,2014-12-22 15:00,2015-01-07 15:00,,PT_Normal,,,,,frV/kk2C5E6u6PYNbFDDlQ,,,,N,0,0,,,2014-04-13 07:21,2014-04-14 17:03,admin,admin,
3926,144023,6971,40001,7842,0,N,N,N,CP_Phys,TT_Task,DT_FixedDrtn,TK_NotStart,CZA-TK-0600-1060,Cutting of Floating Legs and Manhole,8502,2906,0,70,0,0,0,70,0,0,0,,,,2015-01-07 15:00,2015-01-15 15:00,,2014-02-03 09:00,2014-02-11 09:00,2014-02-03 09:00,2014-02-11 09:00,2014-02-03 09:00,2014-02-11 09:00,2015-01-07 15:00,2015-01-15 15:00,,PT_Normal,,,,,8FCUQaJ9dUauBqYAf7TZZw,,,,N,0,0,,,2014-04-13 07:21,2014-04-14 17:03,admin,admin,
3927,144024,6971,40001,7842,0,N,N,N,CP_Phys,TT_Task,DT_FixedDrtn,TK_NotStart,CZA-TK-0600-1070,"Cutting, Fit-up and Welding of Roof Structure",8502,2906,0,70,0,2948.4597,2948.4597,70,0,0,0,,,,2015-01-15 15:00,2015-01-24 15:00,,2014-02-11 09:00,2014-02-19 09:00,2014-02-11 09:00,2014-02-19 09:00,2014-02-11 09:00,2014-02-19 09:00,2015-01-15 15:00,2015-01-24 15:00,,PT_Normal,,,,,RucImaq/Dk6vHXTIFdPoJw,,,,N,0,0,,,2014-04-13 07:21,2014-04-14 17:03,admin,admin,
3928,144025,6971,40001,7842,0,N,N,N,CP_Phys,TT_Task,DT_FixedDrtn,TK_NotStart,CZA-TK-0600-1080,Cutting of Compression Ring & Stairways,8502,2906,0,100,0,0,0,100,0,0,0,,,,2015-01-18 11:00,2015-01-29 11:00,,2014-02-12 15:00,2014-02-24 15:00,2014-02-12 15:00,2014-02-24 15:00,2014-02-12 15:00,2014-02-24 15:00,2015-01-18 11:00,2015-01-29 11:00,,PT_Normal,,,,,2C4tcbYa6kafmIYQDdhJWQ,,,,N,0,0,,,2014-04-13 07:21,2014-04-14 17:03,admin,admin,
3929,144026,6971,40001,7842,0,N,N,N,CP_Phys,TT_Task,DT_FixedDrtn,TK_NotStart,CZA-TK-0600-1090,Cutting of Roof Plates,8502,2906,0,40,0,0,0,40,0,0,0,,,,2015-01-18 11:00,2015-01-22 11:00,,2014-02-12 15:00,2014-02-17 15:00,2014-02-12 15:00,2014-02-17 15:00,2014-02-12 15:00,2014-02-17 15:00,2015-01-18 11:00,2015-01-22 11:00,,PT_Normal,,,,,jXscN1L+rESvW1FNzipekg,,,,N,0,0,,,2014-04-13 07:21,2014-04-14 17:03,admin,admin,
3930,144027,6971,40001,7842,0,N,N,N,CP_Phys,TT_Task,DT_FixedDrtn,TK_NotStart,CZA-TK-0600-1100,"Cutting, Fit-up and Welding of Roof Nozzles, Manholes and Other  Appurtanances",8502,2906,0,60,0,0,0,60,0,0,0,,,,2015-01-20 15:00,2015-01-27 15:00,,2014-02-16 09:00,2014-02-23 09:00,2014-02-16 09:00,2014-02-23 09:00,2014-02-16 09:00,2014-02-23 09:00,2015-01-20 15:00,2015-01-27 15:00,,PT_Normal,,,,,bxQRxS3BIk6LmCghcHUDkg,,,,N,0,0,,,2014-04-13 07:21,2014-04-14 17:03,admin,admin,
3931,144028,6971,40001,7842,0,N,N,N,CP_Phys,TT_Task,DT_FixedDrtn,TK_NotStart,CZA-TK-0600-1110,"Cutting, Fit-up & Welding of Roof Platform, Gratings and Handrails",8502,2906,0,140,0,0,0,140,0,0,0,,,,2015-01-20 15:00,2015-02-05 15:00,,2014-02-16 09:00,2014-03-04 09:00,2014-02-16 09:00,2014-03-04 09:00,2014-02-16 09:00,2014-03-04 09:00,2015-01-20 15:00,2015-02-05 15:00,,PT_Normal,,,,,NDDl3Wk+RUShUbmsIWf+4g,,,,N,0,0,,,2014-04-13 07:21,2014-04-14 17:03,admin,admin,
3932,144029,6971,40001,7842,0,N,N,N,CP_Phys,TT_Task,DT_FixedDrtn,TK_NotStart,CZA-TK-0600-1120,"Cutting, Bevelling & Rolling of Shell No.7",8502,2906,0,20,0,1950.3981,1950.3981,20,0,0,0,,,,2015-02-05 15:00,2015-02-08 15:00,,2014-03-04 09:00,2014-03-06 09:00,2014-03-04 09:00,2014-03-06 09:00,2014-03-04 09:00,2014-03-06 09:00,2015-02-05 15:00,2015-02-08 15:00,,PT_Normal,,,,,51Q2zI0kdE+t/2dzD0RNYg,,,,N,0,0,,,2014-04-13 07:21,2014-04-14 17:03,admin,admin,
3933,144030,6971,40001,7842,0,N,N,N,CP_Phys,TT_Task,DT_FixedDrtn,TK_NotStart,CZA-TK-0600-1130,"Cutting, Bevelling & Rolling of Shell No.6",8502,2906,0,20,0,1950.3981,1950.3981,20,0,0,0,,,,2015-02-05 15:00,2015-02-08 15:00,,2014-03-04 09:00,2014-03-06 09:00,2014-03-04 09:00,2014-03-06 09:00,2014-03-04 09:00,2014-03-06 09:00,2015-02-05 15:00,2015-02-08 15:00,,PT_Normal,,,,,pjizq6MwhEmKeN5n4ULnvQ,,,,N,0,0,,,2014-04-13 07:21,2014-04-14 17:03,admin,admin,
3934,144031,6971,40001,7842,0,N,N,N,CP_Phys,TT_Task,DT_FixedDrtn,TK_NotStart,CZA-TK-0600-1140,"Cutting, Bevelling & Rolling of Shell No.5",8502,2906,0,20,0,2681.9829,2681.9829,20,0,0,0,,,,2015-02-08 15:00,2015-02-10 15:00,,2014-03-06 09:00,2014-03-09 09:00,2014-03-06 09:00,2014-03-09 09:00,2014-03-06 09:00,2014-03-09 09:00,2015-02-08 15:00,2015-02-10 15:00,,PT_Normal,,,,,bm1x8F8T7keMH3qR7ICl/Q,,,,N,0,0,,,2014-04-13 07:21,2014-04-14 17:03,admin,admin,
3935,144032,6971,40001,7842,0,N,N,N,CP_Phys,TT_Task,DT_FixedDrtn,TK_NotStart,CZA-TK-0600-1150,"Cutting, Bevelling & Rolling of Shell No.4",8502,2906,0,20,0,3413.6556,3413.6556,20,0,0,0,,,,2015-02-10 15:00,2015-02-12 15:00,,2014-03-09 09:00,2014-03-11 09:00,2014-03-09 09:00,2014-03-11 09:00,2014-03-09 09:00,2014-03-11 09:00,2015-02-10 15:00,2015-02-12 15:00,,PT_Normal,,,,,RIIePMA5R0eNuoJGMd3jBw,,,,N,0,0,,,2014-04-13 07:21,2014-04-14 17:03,admin,admin,
3936,144033,6971,40001,7842,0,N,N,N,CP_Phys,TT_Task,DT_FixedDrtn,TK_NotStart,CZA-TK-0600-1160,"Cutting, Bevelling & Rolling of Shell No.3",8502,2906,0,20,0,3901.5027,3901.5027,20,0,0,0,,,,2015-02-10 15:00,2015-02-12 15:00,,2014-03-09 09:00,2014-03-11 09:00,2014-03-09 09:00,2014-03-11 09:00,2014-03-09 09:00,2014-03-11 09:00,2015-02-10 15:00,2015-02-12 15:00,,PT_Normal,,,,,3Gn6PxBaHU6PYOy+F5Tbkw,,,,N,0,0,,,2014-04-13 07:21,2014-04-14 17:03,admin,admin,
3937,144034,6971,40001,7842,0,N,N,N,CP_Phys,TT_Task,DT_FixedDrtn,TK_NotStart,CZA-TK-0600-1170,"Cutting, Bevelling & Rolling of Shell No.2",8502,2906,0,20,0,4633.3359,4633.3359,20,0,0,0,,,,2015-02-12 15:00,2015-02-15 15:00,,2014-03-11 09:00,2014-03-13 09:00,2014-03-11 09:00,2014-03-13 09:00,2014-03-11 09:00,2014-03-13 09:00,2015-02-12 15:00,2015-02-15 15:00,,PT_Normal,,,,,aYIue+AP2UWBwtgyHssfsQ,,,,N,0,0,,,2014-04-13 07:21,2014-04-14 17:03,admin,admin,
3938,144035,6971,40001,7842,0,N,N,N,CP_Phys,TT_Task,DT_FixedDrtn,TK_NotStart,CZA-TK-0600-1180,"Cutting, Bevelling & Rolling of Shell No.1",8502,2906,0,20,0,2385.2265,2385.2265,20,0,0,0,,,,2015-02-15 15:00,2015-02-17 15:00,,2014-03-13 09:00,2014-03-16 09:00,2014-03-13 09:00,2014-03-16 09:00,2014-03-13 09:00,2014-03-16 09:00,2015-02-15 15:00,2015-02-17 15:00,,PT_Normal,,,,,4y/8ElpVaUeZ8cbBi/Nj7Q,,,,N,0,0,,,2014-04-13 07:21,2014-04-14 17:03,admin,admin,
3939,144036,6971,40001,7842,0,N,N,N,CP_Phys,TT_Task,DT_FixedDrtn,TK_NotStart,CZA-TK-0600-1190,"Cutting, Fit-up and Welding of Shell Nozzles, Manholes and Other Appurtances",8502,2906,0,70,0,160.1992,160.1992,70,0,0,0,,,,2015-02-15 15:00,2015-02-23 15:00,,2014-03-13 09:00,2014-03-22 09:00,2014-03-13 09:00,2014-03-22 09:00,2014-03-13 09:00,2014-03-22 09:00,2015-02-15 15:00,2015-02-23 15:00,,PT_Normal,,,,,27sHbwRzNU2C+51mo+NgqQ,,,,N,0,0,,,2014-04-13 07:21,2014-04-14 17:03,admin,admin,
3940,144037,6971,40001,7842,0,N,N,N,CP_Phys,TT_Task,DT_FixedDrtn,TK_NotStart,CZA-TK-0600-1200,"Cutting, Fit-up & Welding of Stairway Platform, Gratings and Handrails",8502,2906,1924,60,0,0,0,60,0,0,0,,,,2015-02-15 15:00,2015-02-22 15:00,,2014-03-13 09:00,2014-03-20 09:00,2014-03-13 09:00,2014-03-20 09:00,2014-03-13 09:00,2014-03-20 09:00,2015-02-15 15:00,2015-02-22 15:00,,PT_Normal,,,,,rc1zlYmRfkWc4Xptainz2A,,,,N,0,0,,,2014-04-13 07:21,2014-04-14 17:03,admin,admin,
3941,144038,6971,40001,7842,0,N,N,N,CP_Phys,TT_Task,DT_FixedDrtn,TK_NotStart,CZA-TK-0600-1040,Cutting of Floating Deck,8502,2906,0,70,0,1677.6576,1677.6576,70,0,0,0,,,,2014-12-22 07:00,2014-12-29 17:00,,2014-01-16 11:00,2014-01-25 11:00,2014-01-16 11:00,2014-01-25 11:00,2014-01-16 11:00,2014-01-25 11:00,2014-12-22 07:00,2014-12-29 17:00,,PT_Normal,,,,,3dPugw0/U0O86ILK8pm2SA,,,,N,0,0,,,2014-04-13 07:21,2014-04-14 17:03,admin,admin,
3942,144039,6971,40002,7842,0,N,N,N,CP_Phys,TT_Mile,DT_FixedDrtn,TK_NotStart,CZA-TK-0600-1210,Foundation Takeover From Client,,0,0,0,0,0,0,0,0,0,0,2014-03-31 00:00,,,2014-03-30 17:00,2014-03-30 17:00,,2014-03-31 07:00,2014-03-31 07:00,2014-03-31 07:00,2014-03-31 07:00,2014-03-31 07:00,2014-03-31 07:00,2014-03-30 17:00,2014-03-30 17:00,CS_MSO,PT_Normal,,,,,rvm/JoqGG0+y1gerYGpgPQ,,,,N,0,0,,,2014-04-13 07:21,2014-04-13 07:42,admin,admin,
3943,144040,6971,40003,7842,0,N,N,N,CP_Phys,TT_Task,DT_FixedDrtn,TK_NotStart,CZA-TK-0600-1900,"Filling, Holding and Draining",8397,982,0,410,0,41,41,410,0,0,0,,,,2015-03-14 15:00,2015-04-30 15:00,,2014-11-19 13:00,2015-01-06 13:00,2014-11-19 13:00,2015-01-06 13:00,2014-11-19 13:00,2015-01-06 13:00,2015-03-14 15:00,2015-04-30 15:00,,PT_Normal,,,,,i4s0DaT56kSEZM4EvBBVOw,,,,N,0,0,,,2014-04-13 07:21,2014-04-14 14:41,admin,admin,
3944,144041,6971,40093,7842,0,N,N,N,CP_Phys,TT_Task,DT_FixedDrtn,TK_NotStart,CZA-TK-0600-1910,"Blasting & Painting (Bottom, Shell & Roof) Inside and Outside",8397,1162,0,250,0,25,25,250,750,0,750,,,,2015-05-21 15:00,2015-06-20 15:00,,2015-01-06 13:00,2015-02-04 13:00,2015-01-06 13:00,2015-02-04 13:00,2015-01-06 13:00,2015-02-04 13:00,2015-05-21 15:00,2015-06-20 15:00,,PT_Normal,,,,,FcWaxC/sgUWXuHXsKPbvCg,,,,N,0,0,,,2014-04-13 07:21,2014-04-14 14:41,admin,admin,
3945,144042,6971,40634,7842,0,N,N,N,CP_Phys,TT_Task,DT_FixedDrtn,TK_NotStart,CZA-TK-0525-2460,Laying and Fit-up,8403,0,0,10,0,111.868968,111.868968,10,30,0,30,,,,2014-12-15 07:00,2014-12-15 17:00,,2014-12-15 07:00,2014-12-15 17:00,2014-12-15 07:00,2014-12-15 17:00,2014-12-15 07:00,2014-12-15 17:00,2014-12-15 07:00,2014-12-15 17:00,,PT_Normal,,,,,0kgZ1c7eiUWfxbJ8H23MkA,PIgrLqdJgUiWzXfC3n7jTQ,,,Y,0,0,,,2014-04-13 07:21,2014-04-14 16:04,admin,admin,
3946,144043,6971,40634,7842,0,N,N,N,CP_Phys,TT_Task,DT_FixedDrtn,TK_NotStart,CZA-TK-0525-2470,Welding,8403,0,0,30,0,139.83621,139.83621,30,90,0,90,,,,2014-12-16 07:00,2014-12-18 17:00,,2014-12-16 07:00,2014-12-18 17:00,2014-12-16 07:00,2014-12-18 17:00,2014-12-16 07:00,2014-12-18 17:00,2014-12-16 07:00,2014-12-18 17:00,,PT_Normal,,,,,UiZc7NT+gk2M+Z3ofUVloA,TrPoup61nECpnMOyepRp4A,,,Y,0,0,,,2014-04-13 07:21,2014-04-14 16:04,admin,admin,
3947,144044,6971,40634,7842,0,N,N,N,CP_Phys,TT_Task,DT_FixedDrtn,TK_NotStart,CZA-TK-0525-2480,Inspection,8403,0,0,40,0,27.967242,27.967242,40,0,0,0,,,,2014-12-15 07:00,2014-12-18 17:00,,2014-12-15 07:00,2014-12-18 17:00,2014-12-15 07:00,2014-12-18 17:00,2014-12-15 07:00,2014-12-18 17:00,2014-12-15 07:00,2014-12-18 17:00,,PT_Normal,,,,,JTlinsxZs020Pa61qb25mA,RvkK1mmHD0KCoAx5cV48pg,,,Y,0,0,,,2014-04-13 07:21,2014-04-14 16:04,admin,admin,
3948,144045,6971,40635,7842,0,N,N,N,CP_Phys,TT_Task,DT_FixedDrtn,TK_NotStart,CZA-TK-0525-2490,Erection and Fit-up,8403,0,0,10,0,111.868968,111.868968,10,30,0,30,,,,2014-12-20 07:00,2014-12-20 17:00,,2014-12-20 07:00,2014-12-20 17:00,2014-12-20 07:00,2014-12-20 17:00,2014-12-20 07:00,2014-12-20 17:00,2014-12-20 07:00,2014-12-20 17:00,,PT_Normal,,,,,txj8cGg8pUm92eE1HWdYOQ,xyl6SgNOGEeHnWRXh65tuw,,,Y,0,0,,,2014-04-13 07:21,2014-04-14 16:04,admin,admin,
3949,144046,6971,40635,7842,0,N,N,N,CP_Phys,TT_Task,DT_FixedDrtn,TK_NotStart,CZA-TK-0525-2500,Welding,8403,0,0,40,0,139.83621,139.83621,40,120,0,120,,,,2014-12-21 07:00,2014-12-24 17:00,,2014-12-21 07:00,2014-12-24 17:00,2014-12-21 07:00,2014-12-24 17:00,2014-12-21 07:00,2014-12-24 17:00,2014-12-21 07:00,2014-12-24 17:00,,PT_Normal,,,,,7BExsdt76EOaQO4TEQyWVQ,OnRQrfWit0Wv4hs5spSdbQ,,,Y,0,0,,,2014-04-13 07:21,2014-04-14 16:04,admin,admin,
3950,144047,6971,40635,7842,0,N,N,N,CP_Phys,TT_Task,DT_FixedDrtn,TK_NotStart,CZA-TK-0525-2510,Inspection,8403,0,0,50,0,27.967242,27.967242,50,0,0,0,,,,2014-12-20 07:00,2014-12-24 17:00,,2014-12-20 07:00,2014-12-24 17:00,2014-12-20 07:00,2014-12-24 17:00,2014-12-20 07:00,2014-12-24 17:00,2014-12-20 07:00,2014-12-24 17:00,,PT_Normal,,,,,sC5iaa2OHUy9508nigREnA,bDIHhlKLFEyj0KgnrJcIuQ,,,Y,0,0,,,2014-04-13 07:21,2014-04-14 16:04,admin,admin,
3951,144048,6971,40636,7842,0,N,N,N,CP_Phys,TT_Task,DT_FixedDrtn,TK_NotStart,CZA-TK-0525-2520,Erection and Fit-up,8403,0,0,10,0,138.814706,138.814706,10,30,0,30,,,,2014-12-25 07:00,2014-12-25 17:00,,2014-12-25 07:00,2014-12-25 17:00,2014-12-25 07:00,2014-12-25 17:00,2014-12-25 07:00,2014-12-25 17:00,2014-12-25 07:00,2014-12-25 17:00,,PT_Normal,,,,,/P9HBAQmwUqfKQ1DKcwaeQ,FwfxeoqIXEquttE6Jq1Iyw,,,Y,0,0,,,2014-04-13 07:21,2014-04-14 16:04,admin,admin,
3952,144049,6971,40636,7842,0,N,N,N,CP_Phys,TT_Task,DT_FixedDrtn,TK_NotStart,CZA-TK-0525-2530,Welding,8403,0,0,40,0,173.518383,173.518383,40,120,0,120,,,,2014-12-27 07:00,2014-12-30 17:00,,2014-12-27 07:00,2014-12-30 17:00,2014-12-27 07:00,2014-12-30 17:00,2014-12-27 07:00,2014-12-30 17:00,2014-12-27 07:00,2014-12-30 17:00,,PT_Normal,,,,,U5P2dhxzRUWh9zLZhTAeMw,F176wMlijkGF5fjLAIAMDg,,,Y,0,0,,,2014-04-13 07:21,2014-04-14 16:04,admin,admin,
3953,144050,6971,40636,7842,0,N,N,N,CP_Phys,TT_Task,DT_FixedDrtn,TK_NotStart,CZA-TK-0525-2540,Inspection,8403,0,0,50,0,34.703677,34.703677,50,0,0,0,,,,2014-12-25 07:00,2014-12-30 17:00,,2014-12-25 07:00,2014-12-30 17:00,2014-12-25 07:00,2014-12-30 17:00,2014-12-25 07:00,2014-12-30 17:00,2014-12-25 07:00,2014-12-30 17:00,,PT_Normal,,,,,mJLuIQEHZkWpT7qkikIaWw,iNWQgMYjBEuUO8McTHVbQQ,,,Y,0,0,,,2014-04-13 07:21,2014-04-14 16:04,admin,admin,
3954,144051,6971,40637,7842,0,N,N,N,CP_Phys,TT_Task,DT_FixedDrtn,TK_NotStart,CZA-TK-0525-2550,Erection and Fit-up,8403,0,0,10,0,132.422494,132.422494,10,30,0,30,,,,2014-12-31 07:00,2014-12-31 17:00,,2014-12-31 07:00,2014-12-31 17:00,2014-12-31 07:00,2014-12-31 17:00,2014-12-31 07:00,2014-12-31 17:00,2014-12-31 07:00,2014-12-31 17:00,,PT_Normal,,,,,eDl+SMgy2023vmpsP48T6w,36J+ccM4pEOv8lQqbuksaA,,,Y,0,0,,,2014-04-13 07:21,2014-04-14 16:04,admin,admin,
3955,144052,6971,40637,7842,0,N,N,N,CP_Phys,TT_Task,DT_FixedDrtn,TK_NotStart,CZA-TK-0525-2560,Welding,8403,0,0,40,0,165.528118,165.528118,40,120,0,120,,,,2015-01-01 07:00,2015-01-05 17:00,,2015-01-01 07:00,2015-01-05 17:00,2015-01-01 07:00,2015-01-05 17:00,2015-01-01 07:00,2015-01-05 17:00,2015-01-01 07:00,2015-01-05 17:00,,PT_Normal,,,,,KyyuMSGawE2v7Vbyo0Mheg,OfKyZtbBfE+aK76NbhjaQw,,,Y,0,0,,,2014-04-13 07:21,2014-04-14 16:04,admin,admin,
3956,144053,6971,40637,7842,0,N,N,N,CP_Phys,TT_Task,DT_FixedDrtn,TK_NotStart,CZA-TK-0525-2570,Inspection,8403,0,0,50,0,33.105624,33.105624,50,0,0,0,,,,2014-12-31 07:00,2015-01-05 17:00,,2014-12-31 07:00,2015-01-05 17:00,2014-12-31 07:00,2015-01-05 17:00,2014-12-31 07:00,2015-01-05 17:00,2014-12-31 07:00,2015-01-05 17:00,,PT_Normal,,,,,dCiHwcBcyE26lrm2V+T3ag,b9dh3bfm+U2lwtjbag4fZA,,,Y,0,0,,,2014-04-13 07:21,2014-04-14 16:04,admin,admin,
3957,144054,6971,40638,7842,0,N,N,N,CP_Phys,TT_Task,DT_FixedDrtn,TK_NotStart,CZA-TK-0525-2580,"Cutting, Installation and Fit-up",8403,0,0,20,0,0,0,20,60,0,60,,,,2015-01-06 07:00,2015-01-07 17:00,,2015-01-06 07:00,2015-01-07 17:00,2015-01-06 07:00,2015-01-07 17:00,2015-01-06 07:00,2015-01-07 17:00,2015-01-06 07:00,2015-01-07 17:00,,PT_Normal,,,,,XJSodCSbMk+xz20mRleIGg,+tzPEtBpjkO3qGmGhzvYEg,,,Y,0,0,,,2014-04-13 07:21,2014-04-14 16:04,admin,admin,
3958,144055,6971,40638,7842,0,N,N,N,CP_Phys,TT_Task,DT_FixedDrtn,TK_NotStart,CZA-TK-0525-2590,Welding,8403,0,0,30,0,0,0,30,90,0,90,,,,2015-01-08 07:00,2015-01-11 17:00,,2015-01-08 07:00,2015-01-11 17:00,2015-01-08 07:00,2015-01-11 17:00,2015-01-08 07:00,2015-01-11 17:00,2015-01-08 07:00,2015-01-11 17:00,,PT_Normal,,,,,oCoVo00TgEWYoUyvXH6jNQ,W5nfbK1tY0Oe/9pByvnr6g,,,Y,0,0,,,2014-04-13 07:21,2014-04-14 16:04,admin,admin,
3959,144056,6971,40638,7842,0,N,N,N,CP_Phys,TT_Task,DT_FixedDrtn,TK_NotStart,CZA-TK-0525-2600,Inspection,8403,0,0,50,0,0,0,50,0,0,0,,,,2015-01-06 07:00,2015-01-11 17:00,,2015-01-06 07:00,2015-01-11 17:00,2015-01-06 07:00,2015-01-11 17:00,2015-01-06 07:00,2015-01-11 17:00,2015-01-06 07:00,2015-01-11 17:00,,PT_Normal,,,,,Pog+VhOVR0+HMC7sDj6wsw,GWart6cKgEyEL3E5xUtBFA,,,Y,0,0,,,2014-04-13 07:21,2014-04-14 16:04,admin,admin,
3960,144057,6971,40639,7842,0,N,N,N,CP_Phys,TT_Task,DT_FixedDrtn,TK_NotStart,CZA-TK-0525-2610,Laying & Fit-up,8403,0,0,30,0,0,0,30,90,0,90,,,,2015-01-12 07:00,2015-01-14 17:00,,2015-01-12 07:00,2015-01-14 17:00,2015-01-12 07:00,2015-01-14 17:00,2015-01-12 07:00,2015-01-14 17:00,2015-01-12 07:00,2015-01-14 17:00,,PT_Normal,,,,,yHsK6z6/hkeEWL0SL9kCCA,aZO/qOlupkqQ2QIgh7KT1g,,,Y,0,0,,,2014-04-13 07:21,2014-04-14 16:04,admin,admin,
3961,144058,6971,40639,7842,0,N,N,N,CP_Phys,TT_Task,DT_FixedDrtn,TK_NotStart,CZA-TK-0525-2620,Welding,8403,0,0,70,0,0,0,70,210,0,210,,,,2015-01-15 07:00,2015-01-22 17:00,,2015-01-15 07:00,2015-01-22 17:00,2015-01-15 07:00,2015-01-22 17:00,2015-01-15 07:00,2015-01-22 17:00,2015-01-15 07:00,2015-01-22 17:00,,PT_Normal,,,,,RqNq/X/0Xk6f3ywsz27aDg,5qVSz0Xu6UStBmxDXyYIwQ,,,Y,0,0,,,2014-04-13 07:21,2014-04-14 16:04,admin,admin,
3962,144059,6971,40639,7842,0,N,N,N,CP_Phys,TT_Task,DT_FixedDrtn,TK_NotStart,CZA-TK-0525-2630,Inspection,8403,0,0,100,0,0,0,100,0,0,0,,,,2015-01-12 07:00,2015-01-22 17:00,,2015-01-12 07:00,2015-01-22 17:00,2015-01-12 07:00,2015-01-22 17:00,2015-01-12 07:00,2015-01-22 17:00,2015-01-12 07:00,2015-01-22 17:00,,PT_Normal,,,,,3HE4exX3R0WCIsb2p9koqw,XAgsUqfvF0mXzXDTPRoBxQ,,,Y,0,0,,,2014-04-13 07:21,2014-04-14 16:04,admin,admin,
3963,144060,6971,40640,7842,0,N,N,N,CP_Phys,TT_Task,DT_FixedDrtn,TK_NotStart,CZA-TK-0525-2640,"Cutting of All Holes, Laying and Fit-up",8403,0,0,40,0,169.681506,169.681506,40,120,0,120,,,,2015-01-24 07:00,2015-01-27 17:00,,2015-01-24 07:00,2015-01-27 17:00,2015-01-24 07:00,2015-01-27 17:00,2015-01-24 07:00,2015-01-27 17:00,2015-01-24 07:00,2015-01-27 17:00,,PT_Normal,,,,,L88vLQRCTEiJuwu0eh1EMQ,lmwKR1HAs06dac1kffOxgw,,,Y,0,0,,,2014-04-13 07:21,2014-04-14 16:04,admin,admin,
3964,144061,6971,40640,7842,0,N,N,N,CP_Phys,TT_Task,DT_FixedDrtn,TK_NotStart,CZA-TK-0525-2650,Welding of Sleeves and Plates,8403,0,0,100,0,212.101882,212.101882,100,300,0,300,,,,2015-01-28 07:00,2015-02-08 17:00,,2015-01-28 07:00,2015-02-08 17:00,2015-01-28 07:00,2015-02-08 17:00,2015-01-28 07:00,2015-02-08 17:00,2015-01-28 07:00,2015-02-08 17:00,,PT_Normal,,,,,hFWMi6BcbEGbovdjDh3hjg,f2Adu1bZy0SHFF5T1N3A8w,,,Y,0,0,,,2014-04-13 07:21,2014-04-14 16:04,admin,admin,
3965,144062,6971,40640,7842,0,N,N,N,CP_Phys,TT_Task,DT_FixedDrtn,TK_NotStart,CZA-TK-0525-2660,Installation of Leg Support,8403,0,0,10,0,21.210188,21.210188,10,30,0,30,,,,2015-02-09 07:00,2015-02-09 17:00,,2015-02-09 07:00,2015-02-09 17:00,2015-02-09 07:00,2015-02-09 17:00,2015-02-09 07:00,2015-02-09 17:00,2015-02-09 07:00,2015-02-09 17:00,,PT_Normal,,,,,YW3cGEBqlUG2fwAkc+gX6g,k7ep7KNklkSbbaq0NPkUuA,,,Y,0,0,,,2014-04-13 07:21,2014-04-14 16:04,admin,admin,
3966,144063,6971,40640,7842,0,N,N,N,CP_Phys,TT_Task,DT_FixedDrtn,TK_NotStart,CZA-TK-0525-2670,Inspection,8403,0,0,150,0,21.210188,21.210188,150,0,0,0,,,,2015-01-24 07:00,2015-02-09 17:00,,2015-01-24 07:00,2015-02-09 17:00,2015-01-24 07:00,2015-02-09 17:00,2015-01-24 07:00,2015-02-09 17:00,2015-01-24 07:00,2015-02-09 17:00,,PT_Normal,,,,,iQd5QLNyWkuLS83kCRDuNQ,DAY/CF0YP0GyJWmRyFghYA,,,Y,0,0,,,2014-04-13 07:21,2014-04-14 16:04,admin,admin,
3967,144064,6971,40641,7842,0,N,N,N,CP_Phys,TT_Task,DT_FixedDrtn,TK_NotStart,CZA-TK-0525-2680,Erection and Fit-up,8403,0,0,10,0,115.822074,115.822074,10,30,0,30,,,,2015-02-10 07:00,2015-02-10 17:00,,2015-02-10 07:00,2015-02-10 17:00,2015-02-10 07:00,2015-02-10 17:00,2015-02-10 07:00,2015-02-10 17:00,2015-02-10 07:00,2015-02-10 17:00,,PT_Normal,,,,,C+YDH1PfSk6YGMnydrfqtA,NKsK1kJS+0irj1ps9FQ8fQ,,,Y,0,0,,,2014-04-13 07:21,2014-04-14 16:04,admin,admin,
3968,144065,6971,40641,7842,0,N,N,N,CP_Phys,TT_Task,DT_FixedDrtn,TK_NotStart,CZA-TK-0525-2690,Welding,8403,0,0,40,0,144.777593,144.777593,40,120,0,120,,,,2015-02-11 07:00,2015-02-15 17:00,,2015-02-11 07:00,2015-02-15 17:00,2015-02-11 07:00,2015-02-15 17:00,2015-02-11 07:00,2015-02-15 17:00,2015-02-11 07:00,2015-02-15 17:00,,PT_Normal,,,,,MU4X1IbRSUi5t9T1v9pC6A,GVDmpeuzd0+5+ofRtVfQFw,,,Y,0,0,,,2014-04-13 07:21,2014-04-14 16:04,admin,admin,
3969,144066,6971,40641,7842,0,N,N,N,CP_Phys,TT_Task,DT_FixedDrtn,TK_NotStart,CZA-TK-0525-2700,Inspection,8403,0,0,50,0,28.955519,28.955519,50,0,0,0,,,,2015-02-10 07:00,2015-02-15 17:00,,2015-02-10 07:00,2015-02-15 17:00,2015-02-10 07:00,2015-02-15 17:00,2015-02-10 07:00,2015-02-15 17:00,2015-02-10 07:00,2015-02-15 17:00,,PT_Normal,,,,,P2lOaNZybUqgWFqOc3uv5w,k284UtPyakejNcqfYRLs4A,,,Y,0,0,,,2014-04-13 07:21,2014-04-14 16:04,admin,admin,
3970,144067,6971,40642,7842,0,N,N,N,CP_Phys,TT_Task,DT_FixedDrtn,TK_NotStart,CZA-TK-0525-2710,Erection and Fit-up,8403,0,0,10,0,99.313587,99.313587,10,30,0,30,,,,2015-02-16 07:00,2015-02-16 17:00,,2015-02-16 07:00,2015-02-16 17:00,2015-02-16 07:00,2015-02-16 17:00,2015-02-16 07:00,2015-02-16 17:00,2015-02-16 07:00,2015-02-16 17:00,,PT_Normal,,,,,HsLN8xjOO0OaSiKJIC/87Q,TWKE7ZQgGkSM5xAnFFGlJA,,,Y,0,0,,,2014-04-13 07:21,2014-04-14 16:04,admin,admin,
3971,144068,6971,40642,7842,0,N,N,N,CP_Phys,TT_Task,DT_FixedDrtn,TK_NotStart,CZA-TK-0525-2720,Welding,8403,0,0,40,0,124.141984,124.141984,40,120,0,120,,,,2015-02-17 07:00,2015-02-21 17:00,,2015-02-17 07:00,2015-02-21 17:00,2015-02-17 07:00,2015-02-21 17:00,2015-02-17 07:00,2015-02-21 17:00,2015-02-17 07:00,2015-02-21 17:00,,PT_Normal,,,,,GhxJtlgF8EiCf8NV4A27Sw,5i0IuCbCI0eCE3EmflV8kQ,,,Y,0,0,,,2014-04-13 07:21,2014-04-14 16:04,admin,admin,
3972,144069,6971,40642,7842,0,N,N,N,CP_Phys,TT_Task,DT_FixedDrtn,TK_NotStart,CZA-TK-0525-2730,Inspection,8403,0,0,50,0,24.828397,24.828397,50,0,0,0,,,,2015-02-16 07:00,2015-02-21 17:00,,2015-02-16 07:00,2015-02-21 17:00,2015-02-16 07:00,2015-02-21 17:00,2015-02-16 07:00,2015-02-21 17:00,2015-02-16 07:00,2015-02-21 17:00,,PT_Normal,,,,,fJUVg4uvWEWkh4sYBYZ76w,EgA64yIWJEa09Je7fBu5gA,,,Y,0,0,,,2014-04-13 07:21,2014-04-14 16:04,admin,admin,
3973,144070,6971,40643,7842,0,N,N,N,CP_Phys,TT_Task,DT_FixedDrtn,TK_NotStart,CZA-TK-0525-2740,Erection and Fit-up,8403,0,0,10,0,99.313587,99.313587,10,30,0,30,,,,2015-02-22 07:00,2015-02-22 17:00,,2015-02-22 07:00,2015-02-22 17:00,2015-02-22 07:00,2015-02-22 17:00,2015-02-22 07:00,2015-02-22 17:00,2015-02-22 07:00,2015-02-22 17:00,,PT_Normal,,,,,QRK+v5S5UEuJm2RxXN0tmw,o+3v19/veE2tDUpTi+A1HQ,,,Y,0,0,,,2014-04-13 07:21,2014-04-14 16:04,admin,admin,
3974,144071,6971,40643,7842,0,N,N,N,CP_Phys,TT_Task,DT_FixedDrtn,TK_NotStart,CZA-TK-0525-2750,Welding,8403,0,0,40,0,124.141984,124.141984,40,120,0,120,,,,2015-02-23 07:00,2015-02-26 17:00,,2015-02-23 07:00,2015-02-26 17:00,2015-02-23 07:00,2015-02-26 17:00,2015-02-23 07:00,2015-02-26 17:00,2015-02-23 07:00,2015-02-26 17:00,,PT_Normal,,,,,11Ix7M2Ttk+WwKbfHNGEWQ,cCOE/YF6OUOpKJocwqd39w,,,Y,0,0,,,2014-04-13 07:21,2014-04-14 16:04,admin,admin,
3975,144072,6971,40643,7842,0,N,N,N,CP_Phys,TT_Task,DT_FixedDrtn,TK_NotStart,CZA-TK-0525-2760,Inspection,8403,0,0,50,0,24.828397,24.828397,50,0,0,0,,,,2015-02-22 07:00,2015-02-26 17:00,,2015-02-22 07:00,2015-02-26 17:00,2015-02-22 07:00,2015-02-26 17:00,2015-02-22 07:00,2015-02-26 17:00,2015-02-22 07:00,2015-02-26 17:00,,PT_Normal,,,,,Xv3fLgWIuEeA64bMi0aWJQ,+oRkLQHm9kGqgJibadHI4A,,,Y,0,0,,,2014-04-13 07:21,2014-04-14 16:04,admin,admin,
3976,144073,6971,40644,7842,0,N,N,N,CP_Phys,TT_Task,DT_FixedDrtn,TK_NotStart,CZA-TK-0525-2770,Erection and Fit-up,8403,0,0,10,0,99.313587,99.313587,10,30,0,30,,,,2015-02-28 07:00,2015-02-28 17:00,,2015-02-28 07:00,2015-02-28 17:00,2015-02-28 07:00,2015-02-28 17:00,2015-02-28 07:00,2015-02-28 17:00,2015-02-28 07:00,2015-02-28 17:00,,PT_Normal,,,,,+khYrGVkYEuPJnvS3yU19Q,AmuRuUGy40acFQB0ogYRTA,,,Y,0,0,,,2014-04-13 07:21,2014-04-14 16:04,admin,admin,
3977,144074,6971,40644,7842,0,N,N,N,CP_Phys,TT_Task,DT_FixedDrtn,TK_NotStart,CZA-TK-0525-2780,Welding,8403,0,0,40,0,124.141984,124.141984,40,120,0,120,,,,2015-03-01 07:00,2015-03-04 17:00,,2015-03-01 07:00,2015-03-04 17:00,2015-03-01 07:00,2015-03-04 17:00,2015-03-01 07:00,2015-03-04 17:00,2015-03-01 07:00,2015-03-04 17:00,,PT_Normal,,,,,GDhqG0Zpk0WVDvchBEAkMA,AtJ7Fgq+wU+IBOvR8/03LQ,,,Y,0,0,,,2014-04-13 07:21,2014-04-14 16:04,admin,admin,
3978,144075,6971,40644,7842,0,N,N,N,CP_Phys,TT_Task,DT_FixedDrtn,TK_NotStart,CZA-TK-0525-2790,Inspection,8403,0,0,50,0,24.828397,24.828397,50,0,0,0,,,,2015-02-28 07:00,2015-03-04 17:00,,2015-02-28 07:00,2015-03-04 17:00,2015-02-28 07:00,2015-03-04 17:00,2015-02-28 07:00,2015-03-04 17:00,2015-02-28 07:00,2015-03-04 17:00,,PT_Normal,,,,,cRzNhok7SU+BrklYyx1fCg,scPz0phTZk2J4PElkw3gKA,,,Y,0,0,,,2014-04-13 07:21,2014-04-14 16:04,admin,admin,
3979,144076,6971,40645,7842,0,N,N,N,CP_Phys,TT_Task,DT_FixedDrtn,TK_NotStart,CZA-TK-0525-2800,Erection and Fit-up,8403,0,0,10,0,82.700034,82.700034,10,30,0,30,,,,2015-03-05 07:00,2015-03-05 17:00,,2015-03-05 07:00,2015-03-05 17:00,2015-03-05 07:00,2015-03-05 17:00,2015-03-05 07:00,2015-03-05 17:00,2015-03-05 07:00,2015-03-05 17:00,,PT_Normal,,,,,mJJZqdsuV0Olx2vJkMrm9Q,pLJCh3eJjU2JWOP58Xfcow,,,Y,0,0,,,2014-04-13 07:21,2014-04-14 16:04,admin,admin,
3980,144077,6971,40645,7842,0,N,N,N,CP_Phys,TT_Task,DT_FixedDrtn,TK_NotStart,CZA-TK-0525-2810,Welding,8403,10,10,40,0,103.375043,103.375043,40,120,0,120,,,,2015-03-08 07:00,2015-03-11 17:00,,2015-03-07 07:00,2015-03-10 17:00,2015-03-07 07:00,2015-03-10 17:00,2015-03-07 07:00,2015-03-10 17:00,2015-03-08 07:00,2015-03-11 17:00,,PT_Normal,,,,,M1fMObwL0UWaNqu+QWv0gw,IKShyckjtEGkgyAEVmlMQQ,,,N,0,0,,,2014-04-13 07:21,2014-04-14 16:04,admin,admin,
3981,144078,6971,40645,7842,0,N,N,N,CP_Phys,TT_Task,DT_FixedDrtn,TK_NotStart,CZA-TK-0525-2820,Inspection,8403,0,0,50,0,20.675009,20.675009,50,0,0,0,,,,2015-03-07 07:00,2015-03-11 17:00,,2015-03-07 07:00,2015-03-11 17:00,2015-03-07 07:00,2015-03-11 17:00,2015-03-07 07:00,2015-03-11 17:00,2015-03-07 07:00,2015-03-11 17:00,,PT_Normal,,,,,OgN0pPFRrECtMo0OoZrKpQ,UKl43O86ZUyHjSxEm6SH/A,,,Y,0,0,,,2014-04-13 07:21,2014-04-14 16:04,admin,admin,
3982,144079,6971,40646,7842,0,N,N,N,CP_Phys,TT_Task,DT_FixedDrtn,TK_NotStart,CZA-TK-0525-2830,"Cutting, Installation and Fit-up",8403,0,0,20,0,0,0,20,60,0,60,,,,2015-03-12 07:00,2015-03-14 17:00,,2015-03-12 07:00,2015-03-14 17:00,2015-03-12 07:00,2015-03-14 17:00,2015-03-12 07:00,2015-03-14 17:00,2015-03-12 07:00,2015-03-14 17:00,,PT_Normal,,,,,t0nSgx11CE2q9LK97UaAbg,mSk/bVHicEGF+9K2hnAzag,,,Y,0,0,,,2014-04-13 07:21,2014-04-14 16:04,admin,admin,
3983,144080,6971,40646,7842,0,N,N,N,CP_Phys,TT_Task,DT_FixedDrtn,TK_NotStart,CZA-TK-0525-2840,Welding,8403,0,0,30,0,0,0,30,90,0,90,,,,2015-03-15 07:00,2015-03-17 17:00,,2015-03-15 07:00,2015-03-17 17:00,2015-03-15 07:00,2015-03-17 17:00,2015-03-15 07:00,2015-03-17 17:00,2015-03-15 07:00,2015-03-17 17:00,,PT_Normal,,,,,wBTAx1MR9U6a4AmD6aNmcw,MAfINfUKZ0maNAl77rlBvw,,,Y,0,0,,,2014-04-13 07:21,2014-04-14 16:04,admin,admin,
3984,144081,6971,40646,7842,0,N,N,N,CP_Phys,TT_Task,DT_FixedDrtn,TK_NotStart,CZA-TK-0525-2850,Inspection,8403,0,0,50,0,0,0,50,0,0,0,,,,2015-03-12 07:00,2015-03-17 17:00,,2015-03-12 07:00,2015-03-17 17:00,2015-03-12 07:00,2015-03-17 17:00,2015-03-12 07:00,2015-03-17 17:00,2015-03-12 07:00,2015-03-17 17:00,,PT_Normal,,,,,dOCgYGHa40mllnxGbi74dg,2KLl51yZ+EuTCU/f0FD0jw,,,Y,0,0,,,2014-04-13 07:21,2014-04-14 16:04,admin,admin,
3985,144082,6971,40647,7842,0,N,N,N,CP_Phys,TT_Task,DT_FixedDrtn,TK_NotStart,CZA-TK-0525-2860,Erection and Fit-up,8403,0,0,20,0,185.835395,185.835395,20,60,0,60,,,,2015-03-18 07:00,2015-03-19 17:00,,2015-03-18 07:00,2015-03-19 17:00,2015-03-18 07:00,2015-03-19 17:00,2015-03-18 07:00,2015-03-19 17:00,2015-03-18 07:00,2015-03-19 17:00,,PT_Normal,,,,,2zDrS0eH/0G8zuEBq1MZFw,MENntYKyNkiky5Z7LQKiGQ,,,Y,0,0,,,2014-04-13 07:21,2014-04-14 16:04,admin,admin,
3986,144083,6971,40647,7842,0,N,N,N,CP_Phys,TT_Task,DT_FixedDrtn,TK_NotStart,CZA-TK-0525-2870,Welding,8403,0,0,50,0,232.294244,232.294244,50,150,0,150,,,,2015-03-21 07:00,2015-03-25 17:00,,2015-03-21 07:00,2015-03-25 17:00,2015-03-21 07:00,2015-03-25 17:00,2015-03-21 07:00,2015-03-25 17:00,2015-03-21 07:00,2015-03-25 17:00,,PT_Normal,,,,,83Xyl5Y4Qk6410uAHxOv5A,3uM78wZrI0C1iyILkeT4Dw,,,Y,0,0,,,2014-04-13 07:21,2014-04-14 16:04,admin,admin,
3987,144084,6971,40647,7842,0,N,N,N,CP_Phys,TT_Task,DT_FixedDrtn,TK_NotStart,CZA-TK-0525-2880,Inspection,8403,0,0,70,0,46.458849,46.458849,70,0,0,0,,,,2015-03-18 07:00,2015-03-25 17:00,,2015-03-18 07:00,2015-03-25 17:00,2015-03-18 07:00,2015-03-25 17:00,2015-03-18 07:00,2015-03-25 17:00,2015-03-18 07:00,2015-03-25 17:00,,PT_Normal,,,,,19mSb7FKuk2lhNIGpdJ9Fw,lTU4daOkoUKLNUz2UBCQYA,,,Y,0,0,,,2014-04-13 07:21,2014-04-14 16:04,admin,admin,
3988,144085,6971,40648,7842,0,N,N,N,CP_Phys,TT_Task,DT_FixedDrtn,TK_NotStart,CZA-TK-0525-2890,Laying and Fit-up,8403,0,0,20,0,0,0,20,60,0,60,,,,2015-03-26 07:00,2015-03-28 17:00,,2015-03-26 07:00,2015-03-28 17:00,2015-03-26 07:00,2015-03-28 17:00,2015-03-26 07:00,2015-03-28 17:00,2015-03-26 07:00,2015-03-28 17:00,,PT_Normal,,,,,Dg0p521yZ0C2hcSNoqPnAQ,7JbpXTSF+UeK2FbYUdtrsw,,,Y,0,0,,,2014-04-13 07:21,2014-04-14 16:04,admin,admin,
3989,144086,6971,40648,7842,0,N,N,N,CP_Phys,TT_Task,DT_FixedDrtn,TK_NotStart,CZA-TK-0525-2900,Welding,8403,0,0,50,0,0,0,50,150,0,150,,,,2015-03-29 07:00,2015-04-02 17:00,,2015-03-29 07:00,2015-04-02 17:00,2015-03-29 07:00,2015-04-02 17:00,2015-03-29 07:00,2015-04-02 17:00,2015-03-29 07:00,2015-04-02 17:00,,PT_Normal,,,,,suBLcjikcE+UKDYUtwE2GQ,VeN3LX75UUePijaufXbewg,,,Y,0,0,,,2014-04-13 07:21,2014-04-14 16:04,admin,admin,
3990,144087,6971,40648,7842,0,N,N,N,CP_Phys,TT_Task,DT_FixedDrtn,TK_NotStart,CZA-TK-0525-2910,Inspection,8403,0,0,70,0,0,0,70,0,0,0,,,,2015-03-26 07:00,2015-04-02 17:00,,2015-03-26 07:00,2015-04-02 17:00,2015-03-26 07:00,2015-04-02 17:00,2015-03-26 07:00,2015-04-02 17:00,2015-03-26 07:00,2015-04-02 17:00,,PT_Normal,,,,,sxrLg3PbkEiNvY1ZYzotyQ,qlq7JgLweUyG4LFmlcfBiw,,,Y,0,0,,,2014-04-13 07:21,2014-04-14 16:04,admin,admin,
3991,144088,6971,40649,7842,0,N,N,N,CP_Phys,TT_Task,DT_FixedDrtn,TK_NotStart,CZA-TK-0525-2920,Laying and Fit-up,8403,0,0,10,0,0,0,10,30,0,30,,,,2015-04-04 07:00,2015-04-04 17:00,,2015-04-04 07:00,2015-04-04 17:00,2015-04-04 07:00,2015-04-04 17:00,2015-04-04 07:00,2015-04-04 17:00,2015-04-04 07:00,2015-04-04 17:00,,PT_Normal,,,,,dAMOreQmfkK8qwlb+b+Efg,CiIN1UGRwkitsoczVmdWxg,,,Y,0,0,,,2014-04-13 07:21,2014-04-14 16:04,admin,admin,
3992,144089,6971,40649,7842,0,N,N,N,CP_Phys,TT_Task,DT_FixedDrtn,TK_NotStart,CZA-TK-0525-2930,Welding,8403,0,0,30,0,0,0,30,90,0,90,,,,2015-04-05 07:00,2015-04-07 17:00,,2015-04-05 07:00,2015-04-07 17:00,2015-04-05 07:00,2015-04-07 17:00,2015-04-05 07:00,2015-04-07 17:00,2015-04-05 07:00,2015-04-07 17:00,,PT_Normal,,,,,OLEHyCSVN0SaL7BhlVW6Zw,uGM2yOasFEWSVkprWIaILA,,,Y,0,0,,,2014-04-13 07:21,2014-04-14 16:04,admin,admin,
3993,144090,6971,40649,7842,0,N,N,N,CP_Phys,TT_Task,DT_FixedDrtn,TK_NotStart,CZA-TK-0525-2940,Inspection,8403,0,0,40,0,0,0,40,0,0,0,,,,2015-04-04 07:00,2015-04-07 17:00,,2015-04-04 07:00,2015-04-07 17:00,2015-04-04 07:00,2015-04-07 17:00,2015-04-04 07:00,2015-04-07 17:00,2015-04-04 07:00,2015-04-07 17:00,,PT_Normal,,,,,Y5sDp1Uq9EqL+qiP7o0YTA,/D0s0VDZAkmDRQ1RItRnAg,,,Y,0,0,,,2014-04-13 07:21,2014-04-14 16:04,admin,admin,
3994,144091,6971,40650,7842,0,N,N,N,CP_Phys,TT_Task,DT_FixedDrtn,TK_NotStart,CZA-TK-0525-2950,Installation and Fit-up,8403,0,0,20,0,0,0,20,60,0,60,,,,2015-04-08 07:00,2015-04-09 17:00,,2015-04-08 07:00,2015-04-09 17:00,2015-04-08 07:00,2015-04-09 17:00,2015-04-08 07:00,2015-04-09 17:00,2015-04-08 07:00,2015-04-09 17:00,,PT_Normal,,,,,lTQWyo2N5ECJm6ap8nxb8g,qveOyBMvuUC/sMlUK8IhFw,,,Y,0,0,,,2014-04-13 07:21,2014-04-14 16:04,admin,admin,
3995,144092,6971,40650,7842,0,N,N,N,CP_Phys,TT_Task,DT_FixedDrtn,TK_NotStart,CZA-TK-0525-2960,Welding,8403,0,0,50,0,0,0,50,150,0,150,,,,2015-04-11 07:00,2015-04-15 17:00,,2015-04-11 07:00,2015-04-15 17:00,2015-04-11 07:00,2015-04-15 17:00,2015-04-11 07:00,2015-04-15 17:00,2015-04-11 07:00,2015-04-15 17:00,,PT_Normal,,,,,7pqrGfY8wkGWdEyCIwqrFQ,QevGiSMBO0uPw0M5Onx5hQ,,,Y,0,0,,,2014-04-13 07:21,2014-04-14 16:04,admin,admin,
3996,144093,6971,40650,7842,0,N,N,N,CP_Phys,TT_Task,DT_FixedDrtn,TK_NotStart,CZA-TK-0525-2970,Inspection,8403,0,0,70,0,0,0,70,0,0,0,,,,2015-04-08 07:00,2015-04-15 17:00,,2015-04-08 07:00,2015-04-15 17:00,2015-04-08 07:00,2015-04-15 17:00,2015-04-08 07:00,2015-04-15 17:00,2015-04-08 07:00,2015-04-15 17:00,,PT_Normal,,,,,0rm8jmQ4hk+2r4CiyevBTw,Vtb4NBstLE6xg9KATZiWzA,,,Y,0,0,,,2014-04-13 07:21,2014-04-14 16:04,admin,admin,
3997,144094,6971,40651,7842,0,N,N,N,CP_Phys,TT_Task,DT_FixedDrtn,TK_NotStart,CZA-TK-0525-2980,Erection and Fit-up,8403,0,0,30,0,0,0,30,90,0,90,,,,2015-04-16 07:00,2015-04-19 17:00,,2015-04-16 07:00,2015-04-19 17:00,2015-04-16 07:00,2015-04-19 17:00,2015-04-16 07:00,2015-04-19 17:00,2015-04-16 07:00,2015-04-19 17:00,,PT_Normal,,,,,6En4lP8Z5kOQXrDur4x3lg,oNUS0S8AUUqSFrCQT8XOHw,,,Y,0,0,,,2014-04-13 07:21,2014-04-14 16:04,admin,admin,
3998,144095,6971,40651,7842,0,N,N,N,CP_Phys,TT_Task,DT_FixedDrtn,TK_NotStart,CZA-TK-0525-2990,Welding,8403,0,0,100,0,0,0,100,300,0,300,,,,2015-04-20 07:00,2015-04-30 17:00,,2015-04-20 07:00,2015-04-30 17:00,2015-04-20 07:00,2015-04-30 17:00,2015-04-20 07:00,2015-04-30 17:00,2015-04-20 07:00,2015-04-30 17:00,,PT_Normal,,,,,I9rKqL3qWkysHXP4ldXExA,B+LZXQ60vkCcAYBtdgES8g,,,Y,0,0,,,2014-04-13 07:21,2014-04-14 16:04,admin,admin,
3999,144096,6971,40651,7842,0,N,N,N,CP_Phys,TT_Task,DT_FixedDrtn,TK_NotStart,CZA-TK-0525-3000,Inspection,8403,0,0,130,0,0,0,130,0,0,0,,,,2015-04-16 07:00,2015-04-30 17:00,,2015-04-16 07:00,2015-04-30 17:00,2015-04-16 07:00,2015-04-30 17:00,2015-04-16 07:00,2015-04-30 17:00,2015-04-16 07:00,2015-04-30 17:00,,PT_Normal,,,,,8akMwdL/00uLYOHr4YNW9w,SYv8FbwZyUarmWK9d9vPTw,,,Y,0,0,,,2014-04-13 07:21,2014-04-14 16:04,admin,admin,
4000,144097,6971,40652,7842,0,N,N,N,CP_Phys,TT_Task,DT_FixedDrtn,TK_NotStart,CZA-TK-0525-3010,Erection and Fit-up,8403,0,0,30,0,0,0,30,90,0,90,,,,2015-04-21 15:00,2015-04-25 15:00,,2015-04-21 15:00,2015-04-25 15:00,2015-04-21 15:00,2015-04-25 15:00,2015-04-21 15:00,2015-04-25 15:00,2015-04-21 15:00,2015-04-25 15:00,,PT_Normal,,,,,XX9rKk3VPE+inkVwfxwlVg,B8tZGMOkJEe6kIxk1HAGdg,,,Y,0,0,,,2014-04-13 07:21,2014-04-14 16:04,admin,admin,
4001,144098,6971,40652,7842,0,N,N,N,CP_Phys,TT_Task,DT_FixedDrtn,TK_NotStart,CZA-TK-0525-3020,Welding,8403,0,0,100,0,0,0,100,300,0,300,,,,2015-04-25 15:00,2015-05-06 15:00,,2015-04-25 15:00,2015-05-06 15:00,2015-04-25 15:00,2015-05-06 15:00,2015-04-25 15:00,2015-05-06 15:00,2015-04-25 15:00,2015-05-06 15:00,,PT_Normal,,,,,eme8eLfiVEi/zELLZ4g+Mw,21y1y9dcBUaWlKiFYwMjUQ,,,Y,0,0,,,2014-04-13 07:21,2014-04-14 16:04,admin,admin,
4002,144099,6971,40652,7842,0,N,N,N,CP_Phys,TT_Task,DT_FixedDrtn,TK_NotStart,CZA-TK-0525-3030,Inspection,8403,0,0,130,0,0,0,130,0,0,0,,,,2015-04-21 15:00,2015-05-06 15:00,,2015-04-21 15:00,2015-05-06 15:00,2015-04-21 15:00,2015-05-06 15:00,2015-04-21 15:00,2015-05-06 15:00,2015-04-21 15:00,2015-05-06 15:00,,PT_Normal,,,,,VWGDAUFmUEGDb532pzZSlg,nxWp2Q2DRkGfVthiXj8f1A,,,Y,0,0,,,2014-04-13 07:21,2014-04-14 16:04,admin,admin,
4003,144100,6971,40653,7842,0,N,N,N,CP_Phys,TT_Task,DT_FixedDrtn,TK_NotStart,CZA-TK-0525-3040,Installation of Primary and Secondary Seal,8403,0,0,30,0,0,0,30,0,0,0,,,,2015-05-06 15:00,2015-05-10 15:00,,2015-05-06 15:00,2015-05-10 15:00,2015-05-06 15:00,2015-05-10 15:00,2015-05-06 15:00,2015-05-10 15:00,2015-05-06 15:00,2015-05-10 15:00,,PT_Normal,,,,,fHglqLGkwUyoyCWeofwHtA,iRVFebREtkK2DSWD1XstOA,,,Y,0,0,,,2014-04-13 07:21,2014-04-14 16:04,admin,admin,
4004,144101,6971,40653,7842,0,N,N,N,CP_Phys,TT_Task,DT_FixedDrtn,TK_NotStart,CZA-TK-0525-3050,Inspection,8403,0,0,30,0,0,0,30,0,0,0,,,,2015-05-06 15:00,2015-05-10 15:00,,2015-05-06 15:00,2015-05-10 15:00,2015-05-06 15:00,2015-05-10 15:00,2015-05-06 15:00,2015-05-10 15:00,2015-05-06 15:00,2015-05-10 15:00,,PT_Normal,,,,,DP7y7h6d30u3ks7N/4pUKg,ZzOsWTtCW0u+RNQmzW0UCg,,,Y,0,0,,,2014-04-13 07:21,2014-04-14 16:04,admin,admin,
4005,144102,6971,40108,7842,0,N,N,N,CP_Phys,TT_Task,DT_FixedDrtn,TK_NotStart,CZA-TK-0525-2280,Cutting of Annular Plates and Bottom Plates,8508,2922,0,10,0,511.08,511.08,10,0,0,0,,,,2015-02-14 15:00,2015-02-15 15:00,,2014-03-10 13:00,2014-03-11 13:00,2014-03-10 13:00,2014-03-11 13:00,2014-03-10 13:00,2014-03-11 13:00,2015-02-14 15:00,2015-02-15 15:00,,PT_Normal,,,,,Vag0Nwk46UCh3/6qSnlvUw,OM3tCYye90K7rZ5u4kmB9A,,,N,0,0,,,2014-04-13 07:21,2014-04-14 17:03,admin,admin,
4006,144103,6971,40108,7842,0,N,N,N,CP_Phys,TT_Task,DT_FixedDrtn,TK_NotStart,CZA-TK-0525-2290,"Cutting,Bevelling & Rolling Shell No. 1",8508,2922,0,10,0,317.0916,317.0916,10,0,0,0,,,,2015-02-15 15:00,2015-02-16 15:00,,2014-03-11 13:00,2014-03-12 13:00,2014-03-11 13:00,2014-03-12 13:00,2014-03-11 13:00,2014-03-12 13:00,2015-02-15 15:00,2015-02-16 15:00,,PT_Normal,,,,,pX6jre6Cgka4/86DzQQmvA,WgmwGZL7fkiwv9SZ7h1ivw,,,N,0,0,,,2014-04-13 07:21,2014-04-14 17:03,admin,admin,
4007,144104,6971,40108,7842,0,N,N,N,CP_Phys,TT_Task,DT_FixedDrtn,TK_NotStart,CZA-TK-0525-2300,"Cutting , Beveling & Rolling Shell No.2",8508,2922,0,10,0,302.49,302.49,10,0,0,0,,,,2015-02-16 15:00,2015-02-17 15:00,,2014-03-12 13:00,2014-03-13 13:00,2014-03-12 13:00,2014-03-13 13:00,2014-03-12 13:00,2014-03-13 13:00,2015-02-16 15:00,2015-02-17 15:00,,PT_Normal,,,,,CoxdxqI7oEufqLvMczWA0A,Q0T2FT3OEU6xtZhfdyKJtw,,,N,0,0,,,2014-04-13 07:21,2014-04-14 17:03,admin,admin,
4008,144105,6971,40108,7842,0,N,N,N,CP_Phys,TT_Task,DT_FixedDrtn,TK_NotStart,CZA-TK-0525-2310,"Cutting, Fit-up and Weld of Shell Nozzles, Manholes & Other Appurtanances",8508,2922,0,50,0,0,0,50,0,0,0,,,,2015-02-17 15:00,2015-02-23 15:00,,2014-03-13 13:00,2014-03-19 13:00,2014-03-13 13:00,2014-03-19 13:00,2014-03-13 13:00,2014-03-19 13:00,2015-02-17 15:00,2015-02-23 15:00,,PT_Normal,,,,,IA7+KfSHvEmTxfdGLhKMjg,HiVHgci4UUqulY5jpVZ9Vw,,,N,0,0,,,2014-04-13 07:21,2014-04-14 17:03,admin,admin,
4009,144106,6971,40108,7842,0,N,N,N,CP_Phys,TT_Task,DT_FixedDrtn,TK_NotStart,CZA-TK-0525-2320,"Cutting, Bevelling  & Rolling Shell No.3",8508,2922,0,10,0,264.57,264.57,10,0,0,0,,,,2015-02-19 11:00,2015-02-21 11:00,,2014-03-16 09:00,2014-03-17 09:00,2014-03-16 09:00,2014-03-17 09:00,2014-03-16 09:00,2014-03-17 09:00,2015-02-19 11:00,2015-02-21 11:00,,PT_Normal,,,,,VFtHbz5pe0ya8ecOMOKNEQ,PaBQDXH350aKJ2A4P655Aw,,,N,0,0,,,2014-04-13 07:21,2014-04-14 17:03,admin,admin,
4010,144107,6971,40108,7842,0,N,N,N,CP_Phys,TT_Task,DT_FixedDrtn,TK_NotStart,CZA-TK-0525-2330,Cutting of Floating Roof Plates,8508,2922,0,20,0,0,0,20,0,0,0,,,,2015-02-21 11:00,2015-02-23 11:00,,2014-03-17 09:00,2014-03-19 09:00,2014-03-17 09:00,2014-03-19 09:00,2014-03-17 09:00,2014-03-19 09:00,2015-02-21 11:00,2015-02-23 11:00,,PT_Normal,,,,,Mn2bOqN05UyY7sKZEpMJvw,zS+zKFAfaUucyCVvISvbmw,,,N,0,0,,,2014-04-13 07:21,2014-04-14 17:03,admin,admin,
4011,144108,6971,40108,7842,0,N,N,N,CP_Phys,TT_Task,DT_FixedDrtn,TK_NotStart,CZA-TK-0525-2340,"Cutting, Fit-up and Welding  of Pontoon",8508,2922,0,100,0,387.6,387.6,100,0,0,0,,,,2015-02-21 11:00,2015-03-04 11:00,,2014-03-17 09:00,2014-03-29 09:00,2014-03-17 09:00,2014-03-29 09:00,2014-03-17 09:00,2014-03-29 09:00,2015-02-21 11:00,2015-03-04 11:00,,PT_Normal,,,,,+O6NEJ8kSkqT1nq+T/+duQ,iJudkqrJbUakKuupFsuLfg,,,N,0,0,,,2014-04-13 07:21,2014-04-14 17:03,admin,admin,
4012,144109,6971,40108,7842,0,N,N,N,CP_Phys,TT_Task,DT_FixedDrtn,TK_NotStart,CZA-TK-0525-2350,Cutting of Floating Roof Legs and Manholes,8508,2922,0,40,0,0,0,40,0,0,0,,,,2015-03-04 11:00,2015-03-09 11:00,,2014-03-29 09:00,2014-04-02 09:00,2014-03-29 09:00,2014-04-02 09:00,2014-03-29 09:00,2014-04-02 09:00,2015-03-04 11:00,2015-03-09 11:00,,PT_Normal,,,,,wd9APafMSUSjuMZWNLtkCg,GD2il5tMnUaQu6VXLgqQpA,,,N,0,0,,,2014-04-13 07:21,2014-04-14 17:03,admin,admin,
4013,144110,6971,40108,7842,0,N,N,N,CP_Phys,TT_Task,DT_FixedDrtn,TK_NotStart,CZA-TK-0525-2360,"Cutting, Bevelling & Rolling Shell No.4",8508,2922,0,10,0,226.86,226.86,10,0,0,0,,,,2015-03-09 11:00,2015-03-10 11:00,,2014-04-02 09:00,2014-04-03 09:00,2014-04-02 09:00,2014-04-03 09:00,2014-04-02 09:00,2014-04-03 09:00,2015-03-09 11:00,2015-03-10 11:00,,PT_Normal,,,,,acwYCnu8skm+o0r3fbr6JQ,5TunXcXpt0O10PkQFjV3+g,,,N,0,0,,,2014-04-13 07:21,2014-04-14 17:03,admin,admin,
4014,144111,6971,40108,7842,0,N,N,N,CP_Phys,TT_Task,DT_FixedDrtn,TK_NotStart,CZA-TK-0525-2370,"Cutting, Bevelling & Rolling Shell No.5",8508,2922,0,10,0,226.86,226.86,10,0,0,0,,,,2015-03-10 11:00,2015-03-11 11:00,,2014-04-03 09:00,2014-04-05 09:00,2014-04-03 09:00,2014-04-05 09:00,2014-04-03 09:00,2014-04-05 09:00,2015-03-10 11:00,2015-03-11 11:00,,PT_Normal,,,,,drOBGYit202c2txxlnluUg,GKhZUiBhKUm4gFBjBg0Zpg,,,N,0,0,,,2014-04-13 07:21,2014-04-14 17:03,admin,admin,
4015,144112,6971,40108,7842,0,N,N,N,CP_Phys,TT_Task,DT_FixedDrtn,TK_NotStart,CZA-TK-0525-2380,"Cutting, Bevelling & Rolling Shell No.6",8508,2922,0,10,0,226.86,226.86,10,0,0,0,,,,2015-03-11 11:00,2015-03-12 11:00,,2014-04-05 09:00,2014-04-06 09:00,2014-04-05 09:00,2014-04-06 09:00,2014-04-05 09:00,2014-04-06 09:00,2015-03-11 11:00,2015-03-12 11:00,,PT_Normal,,,,,Uk7cHV52mkyajBSpnKtwfQ,4qhVdgTJp0izL6hS4NjCwQ,,,N,0,0,,,2014-04-13 07:21,2014-04-14 17:03,admin,admin,
4016,144113,6971,40108,7842,0,N,N,N,CP_Phys,TT_Task,DT_FixedDrtn,TK_NotStart,CZA-TK-0525-2390,"Cutting, Bevelling & Rolling Shell no.7",8508,2922,0,10,0,188.91,188.91,10,0,0,0,,,,2015-03-12 11:00,2015-03-14 11:00,,2014-04-06 09:00,2014-04-07 09:00,2014-04-06 09:00,2014-04-07 09:00,2014-04-06 09:00,2014-04-07 09:00,2015-03-12 11:00,2015-03-14 11:00,,PT_Normal,,,,,TKb4lJ7jNkS1YwXYHefscA,dSvXlVBZx0G0OWUIjIDJlw,,,N,0,0,,,2014-04-13 07:21,2014-04-14 17:03,admin,admin,
4017,144114,6971,40108,7842,0,N,N,N,CP_Phys,TT_Task,DT_FixedDrtn,TK_NotStart,CZA-TK-0525-2400,"Cutting, Fit-up & Welding Roof Structures & Compression Ring",8508,2922,0,60,0,424.5,424.5,60,0,0,0,,,,2015-03-14 11:00,2015-03-21 11:00,,2014-04-07 09:00,2014-04-14 09:00,2014-04-07 09:00,2014-04-14 09:00,2014-04-07 09:00,2014-04-14 09:00,2015-03-14 11:00,2015-03-21 11:00,,PT_Normal,,,,,ihjbhEC9/0GgRgTiP2z+Ig,j5l1YIn6gkKhvcpfC8GCSQ,,,N,0,0,,,2014-04-13 07:21,2014-04-14 17:03,admin,admin,
4018,144115,6971,40108,7842,0,N,N,N,CP_Phys,TT_Task,DT_FixedDrtn,TK_NotStart,CZA-TK-0525-2410,Cutting of Roof Plates,8508,2922,0,20,0,0,0,20,0,0,0,,,,2015-03-21 11:00,2015-03-23 11:00,,2014-04-14 09:00,2014-04-16 09:00,2014-04-14 09:00,2014-04-16 09:00,2014-04-14 09:00,2014-04-16 09:00,2015-03-21 11:00,2015-03-23 11:00,,PT_Normal,,,,,oCPt+xZzxEeYrGGgaHjHtg,JnqrsT91cEir5gsuMC09sw,,,N,0,0,,,2014-04-13 07:21,2014-04-14 17:03,admin,admin,
4019,144116,6971,40108,7842,0,N,N,N,CP_Phys,TT_Task,DT_FixedDrtn,TK_NotStart,CZA-TK-0525-2420,"Cutting, Fit-up & Welding Roof Platform, Gratings and Handrails",8508,2922,0,100,0,0,0,100,0,0,0,,,,2015-03-23 11:00,2015-04-04 11:00,,2014-04-16 09:00,2014-04-28 09:00,2014-04-16 09:00,2014-04-28 09:00,2014-04-16 09:00,2014-04-28 09:00,2015-03-23 11:00,2015-04-04 11:00,,PT_Normal,,,,,+6h6k8Ik+0KrgjDgD9HucQ,KEJZR081CUuPG3EoDe+LFA,,,N,0,0,,,2014-04-13 07:21,2014-04-14 17:03,admin,admin,
4020,144117,6971,40108,7842,0,N,N,N,CP_Phys,TT_Task,DT_FixedDrtn,TK_NotStart,CZA-TK-0525-2430,"Cutting, Fit-up and Welding of Stairways",8508,2922,0,70,0,0,0,70,0,0,0,,,,2015-03-25 07:00,2015-04-01 17:00,,2014-04-17 15:00,2014-04-26 15:00,2014-04-17 15:00,2014-04-26 15:00,2014-04-17 15:00,2014-04-26 15:00,2015-03-25 07:00,2015-04-01 17:00,,PT_Normal,,,,,F6xAEFacrEavs0sxdN/Bcw,nJa7cMQLT0GNls4gzALnXA,,,N,0,0,,,2014-04-13 07:21,2014-04-14 17:03,admin,admin,
4021,144118,6971,40108,7842,0,N,N,N,CP_Phys,TT_Task,DT_FixedDrtn,TK_NotStart,CZA-TK-0525-2440,"Cutting, Fit-up and Welding of Roof Nozzles, Manholes and Other Appurtanances",8508,2922,2922,50,0,0,0,50,0,0,0,,,,2015-04-02 07:00,2015-04-07 17:00,,2014-04-26 15:00,2014-05-01 15:00,2014-04-26 15:00,2014-05-01 15:00,2014-04-26 15:00,2014-05-01 15:00,2015-04-02 07:00,2015-04-07 17:00,,PT_Normal,,,,,CQgoiH5izkeVf2j0HpWIsw,9Am5JJFG+kSTplD00HiTNg,,,N,0,0,,,2014-04-13 07:21,2014-04-14 17:03,admin,admin,
4022,144119,6971,40118,7842,0,N,N,N,CP_Phys,TT_Mile,DT_FixedDrtn,TK_NotStart,CZA-TK-0525-2450,Foundation Takeover From Client,,0,0,0,0,0,0,0,0,0,0,2014-12-15 00:00,,,2014-12-14 17:00,2014-12-14 17:00,,2014-12-15 07:00,2014-12-15 07:00,2014-12-15 07:00,2014-12-15 07:00,2014-12-15 07:00,2014-12-15 07:00,2014-12-14 17:00,2014-12-14 17:00,CS_MSO,PT_Normal,,,,,uMZaSaBZ0EK6kqc2qyw+cQ,OhOFpHK5p0euUO2PsfsW2Q,,,Y,0,0,,,2014-04-13 07:21,2014-04-13 07:42,admin,admin,
4023,144120,6971,40115,7842,0,N,N,N,CP_Phys,TT_Task,DT_FixedDrtn,TK_NotStart,CZA-TK-0525-3060,"Filling, Holding and Draining of Water",8403,0,0,210,0,2936.921575,2936.921575,210,0,0,0,,,,2015-05-10 15:00,2015-06-03 15:00,,2015-05-10 15:00,2015-06-03 15:00,2015-05-10 15:00,2015-06-03 15:00,2015-05-10 15:00,2015-06-03 15:00,2015-05-10 15:00,2015-06-03 15:00,,PT_Normal,,,,,modlD+ERmEiboEiiiY2hmg,xSkqU5pDN0+bWlVVaZRAVg,,,Y,0,0,,,2014-04-13 07:21,2014-04-14 16:04,admin,admin,
4024,144121,6971,40111,7842,0,N,N,N,CP_Phys,TT_Task,DT_FixedDrtn,TK_NotStart,CZA-TK-0525-3070,"Blasting and Painting Inside, Outside and Bottom Plates",8403,20,0,120,0,1762.152945,1762.152945,120,0,0,0,,,,2015-06-06 15:00,2015-06-20 15:00,,2015-06-03 15:00,2015-06-17 15:00,2015-06-03 15:00,2015-06-17 15:00,2015-06-03 15:00,2015-06-17 15:00,2015-06-06 15:00,2015-06-20 15:00,,PT_Normal,,,,,cPN0vCGWWEWTSadpA5Mbcw,SO4S1KGCNkm9Xeu7rEmp2Q,,,N,0,0,,,2014-04-13 07:21,2014-04-14 16:04,admin,admin,
4025,144122,6971,40022,7842,0,N,N,N,CP_Phys,TT_Task,DT_FixedDrtn,TK_NotStart,CZA-TK-0525-3080,Tank Calibration,8403,20,0,50,0,587.384315,587.384315,50,0,0,0,,,,2015-06-20 15:00,2015-06-25 15:00,,2015-06-17 15:00,2015-06-23 15:00,2015-06-17 15:00,2015-06-23 15:00,2015-06-17 15:00,2015-06-23 15:00,2015-06-20 15:00,2015-06-25 15:00,,PT_Normal,,,,,C6k8IaCjU0m92UvqnHZsAg,6d0L5F/BnkyZQVQbUVVMDA,,,N,0,0,,,2014-04-13 07:21,2014-04-14 16:04,admin,admin,
4026,144123,6971,40022,7842,0,N,N,N,CP_Phys,TT_Task,DT_FixedDrtn,TK_NotStart,CZA-TK-0525-3090,Tank Handover,8403,20,20,20,0,587.384315,587.384315,20,0,0,0,,,,2015-06-25 15:00,2015-06-28 15:00,,2015-06-23 15:00,2015-06-25 15:00,2015-06-23 15:00,2015-06-25 15:00,2015-06-23 15:00,2015-06-25 15:00,2015-06-25 15:00,2015-06-28 15:00,,PT_Normal,,,,,pSxFNsTkA06nR8JR+DwfFA,yjxBsAVQRUWLL76+BtLudQ,,,N,0,0,,,2014-04-13 07:21,2014-04-14 16:04,admin,admin,
4027,144124,6971,40124,7842,0,N,N,N,CP_Phys,TT_Task,DT_FixedDrtn,TK_NotStart,CZA-TK-0601-1610,"Cutting, Bevelling & Rolling of Shell No.4",8503,3186,0,20,0,3413.6556,3413.6556,20,0,0,0,,,,2015-03-15 15:00,2015-03-17 15:00,,2014-03-09 09:00,2014-03-11 09:00,2014-03-09 09:00,2014-03-11 09:00,2014-03-09 09:00,2014-03-11 09:00,2015-03-15 15:00,2015-03-17 15:00,,PT_Normal,,,,,TgCymOaCNkm8waH7sBj6AA,VwezY1VbQEGEQ65IReoPWg,,,N,0,0,,,2014-04-13 07:21,2014-04-14 17:03,admin,admin,
4028,144125,6971,40124,7842,0,N,N,N,CP_Phys,TT_Task,DT_FixedDrtn,TK_NotStart,CZA-TK-0601-1620,"Cutting, Bevelling & Rolling of Shell No.3",8503,3186,0,20,0,3901.5027,3901.5027,20,0,0,0,,,,2015-03-15 15:00,2015-03-17 15:00,,2014-03-09 09:00,2014-03-11 09:00,2014-03-09 09:00,2014-03-11 09:00,2014-03-09 09:00,2014-03-11 09:00,2015-03-15 15:00,2015-03-17 15:00,,PT_Normal,,,,,bVXwep3BgUKAenT0vYIZbw,fPP+YfxQSEu2lhtfX2dy9w,,,N,0,0,,,2014-04-13 07:21,2014-04-14 17:03,admin,admin,
4029,144126,6971,40124,7842,0,N,N,N,CP_Phys,TT_Task,DT_FixedDrtn,TK_NotStart,CZA-TK-0601-1630,"Cutting, Bevelling & Rolling of Shell No.2",8503,3186,0,20,0,4633.3359,4633.3359,20,0,0,0,,,,2015-03-17 15:00,2015-03-19 15:00,,2014-03-11 09:00,2014-03-13 09:00,2014-03-11 09:00,2014-03-13 09:00,2014-03-11 09:00,2014-03-13 09:00,2015-03-17 15:00,2015-03-19 15:00,,PT_Normal,,,,,9iDahkhR50iR6rQR4565pQ,dzoCspINJ0a+gFwPS6Kqyw,,,N,0,0,,,2014-04-13 07:21,2014-04-14 17:03,admin,admin,
4030,144127,6971,40124,7842,0,N,N,N,CP_Phys,TT_Task,DT_FixedDrtn,TK_NotStart,CZA-TK-0601-1640,"Cutting, Bevelling & Rolling of Shell No.1",8503,3186,0,20,0,2385.2265,2385.2265,20,0,0,0,,,,2015-03-19 15:00,2015-03-22 15:00,,2014-03-13 09:00,2014-03-16 09:00,2014-03-13 09:00,2014-03-16 09:00,2014-03-13 09:00,2014-03-16 09:00,2015-03-19 15:00,2015-03-22 15:00,,PT_Normal,,,,,nACjDu08PEO5dPOAGyM00Q,XOvC13oKaUW9mLN/vh2gRQ,,,N,0,0,,,2014-04-13 07:21,2014-04-14 17:03,admin,admin,
4031,144128,6971,40124,7842,0,N,N,N,CP_Phys,TT_Task,DT_FixedDrtn,TK_NotStart,CZA-TK-0601-1650,"Cutting, Fit-up and Welding of Shell Nozzles, Manholes and Other Appurtances",8503,3186,0,70,0,160.1992,160.1992,70,0,0,0,,,,2015-03-19 15:00,2015-03-28 15:00,,2014-03-13 09:00,2014-03-22 09:00,2014-03-13 09:00,2014-03-22 09:00,2014-03-13 09:00,2014-03-22 09:00,2015-03-19 15:00,2015-03-28 15:00,,PT_Normal,,,,,oyNqoX2TiUuYIuwVD86eTQ,7Nrz/n+CCEmzzxtQjS31hA,,,N,0,0,,,2014-04-13 07:21,2014-04-14 17:03,admin,admin,
4032,144129,6971,40124,7842,0,N,N,N,CP_Phys,TT_Task,DT_FixedDrtn,TK_NotStart,CZA-TK-0601-1660,"Cutting, Fit-up & Welding of Stairway Platform, Gratings and Handrails",8503,3186,2094,60,0,0,0,60,0,0,0,,,,2015-03-19 15:00,2015-03-26 15:00,,2014-03-13 09:00,2014-03-20 09:00,2014-03-13 09:00,2014-03-20 09:00,2014-03-13 09:00,2014-03-20 09:00,2015-03-19 15:00,2015-03-26 15:00,,PT_Normal,,,,,6juUuVnyaESBEyub4cLyoA,kF+yfSCcgkmerQdcj1+bfg,,,N,0,0,,,2014-04-13 07:21,2014-04-14 17:03,admin,admin,
4033,144130,6971,40124,7842,0,N,N,N,CP_Phys,TT_Task,DT_FixedDrtn,TK_NotStart,CZA-TK-0601-1600,"Cutting, Bevelling & Rolling of Shell No.5",8503,3186,0,20,0,2681.9829,2681.9829,20,0,0,0,,,,2015-03-12 15:00,2015-03-15 15:00,,2014-03-06 09:00,2014-03-09 09:00,2014-03-06 09:00,2014-03-09 09:00,2014-03-06 09:00,2014-03-09 09:00,2015-03-12 15:00,2015-03-15 15:00,,PT_Normal,,,,,PP4HnR1xWEaxyZDyf5YXOg,vcolBsIApkC+cy9S+SXg+g,,,N,0,0,,,2014-04-13 07:21,2014-04-14 17:03,admin,admin,
4034,144131,6971,40124,7842,0,N,N,N,CP_Phys,TT_Task,DT_FixedDrtn,TK_NotStart,CZA-TK-0601-1460,Cutting of Annular Plates,8503,2906,0,50,0,439.2,439.2,50,0,0,0,,,,2014-12-16 13:00,2014-12-22 13:00,,2014-01-12 07:00,2014-01-16 17:00,2014-01-12 07:00,2014-01-16 17:00,2014-01-12 07:00,2014-01-16 17:00,2014-12-16 13:00,2014-12-22 13:00,,PT_Normal,,,,,b54/jxrcaEKaCV0gDZDnpQ,yAvQDYcuaUu6hLnOXUMz1Q,,,N,0,0,,,2014-04-13 07:21,2014-04-14 17:03,admin,admin,
4035,144132,6971,40124,7842,0,N,N,N,CP_Phys,TT_Task,DT_FixedDrtn,TK_NotStart,CZA-TK-0601-1470,Cutting of Bottom Plates,8503,3186,0,50,0,1953.798,1953.798,50,0,0,0,,,,2015-01-18 13:00,2015-01-24 13:00,,2014-01-12 07:00,2014-01-16 17:00,2014-01-12 07:00,2014-01-16 17:00,2014-01-12 07:00,2014-01-16 17:00,2015-01-18 13:00,2015-01-24 13:00,,PT_Normal,,,,,b52/S2RUFUyY1sfXjGaf1Q,w5WhgKuXxk2awJqxitFotw,,,N,0,0,,,2014-04-13 07:21,2014-04-14 17:03,admin,admin,
4036,144133,6971,40124,7842,0,N,N,N,CP_Phys,TT_Task,DT_FixedDrtn,TK_NotStart,CZA-TK-0601-1480,"Cutting,Bevelling & Rolling Shell No.8",8503,3186,0,20,0,1950.3981,1950.3981,20,0,0,0,,,,2015-01-20 09:00,2015-01-22 09:00,,2014-01-13 13:00,2014-01-15 13:00,2014-01-13 13:00,2014-01-15 13:00,2014-01-13 13:00,2014-01-15 13:00,2015-01-20 09:00,2015-01-22 09:00,,PT_Normal,,,,,U5j4IFxzl02N+I4rSF599A,RwjlHN6fW0O2WmaSwxpCJg,,,N,0,0,,,2014-04-13 07:21,2014-04-14 17:03,admin,admin,
4037,144134,6971,40124,7842,0,N,N,N,CP_Phys,TT_Task,DT_FixedDrtn,TK_NotStart,CZA-TK-0601-1490,"Cutting,Bevelling & Rolling Shell No.9",8503,3186,0,20,0,1075.8609,1075.8609,20,0,0,0,,,,2015-01-21 07:00,2015-01-22 17:00,,2014-01-14 11:00,2014-01-16 11:00,2014-01-14 11:00,2014-01-16 11:00,2014-01-14 11:00,2014-01-16 11:00,2015-01-21 07:00,2015-01-22 17:00,,PT_Normal,,,,,StJL8Cgz+kyuA/SUKx6Zdw,BpIAJjWeTEexUHaWtjFmPw,,,N,0,0,,,2014-04-13 07:21,2014-04-14 17:03,admin,admin,
4038,144135,6971,40124,7842,0,N,N,N,CP_Phys,TT_Task,DT_FixedDrtn,TK_NotStart,CZA-TK-0601-1500,Cutting of Floating Deck,8503,3186,0,70,0,1677.6576,1677.6576,70,0,0,0,,,,2015-01-24 07:00,2015-01-31 17:00,,2014-01-16 11:00,2014-01-25 11:00,2014-01-16 11:00,2014-01-25 11:00,2014-01-16 11:00,2014-01-25 11:00,2015-01-24 07:00,2015-01-31 17:00,,PT_Normal,,,,,Qypd+smpgkeDjmdvbIOqeQ,sm53WO6Ro0aosvf7yz6/Wg,,,N,0,0,,,2014-04-13 07:21,2014-04-14 17:03,admin,admin,
4039,144136,6971,40124,7842,0,N,N,N,CP_Phys,TT_Task,DT_FixedDrtn,TK_NotStart,CZA-TK-0601-1510,Cutting of Pontoon,8503,3186,0,140,0,1161.54,1161.54,140,0,0,0,,,,2015-01-24 15:00,2015-02-09 15:00,,2014-01-18 09:00,2014-02-03 09:00,2014-01-18 09:00,2014-02-03 09:00,2014-01-18 09:00,2014-02-03 09:00,2015-01-24 15:00,2015-02-09 15:00,,PT_Normal,,,,,CA72tpSdcUens7gdQzqhDg,jO7vrRIfu0e2PW8Cgymq7w,,,N,0,0,,,2014-04-13 07:21,2014-04-14 17:03,admin,admin,
4040,144137,6971,40124,7842,0,N,N,N,CP_Phys,TT_Task,DT_FixedDrtn,TK_NotStart,CZA-TK-0601-1520,Cutting of Floating Legs and Manhole,8503,3186,0,70,0,0,0,70,0,0,0,,,,2015-02-09 15:00,2015-02-17 15:00,,2014-02-03 09:00,2014-02-11 09:00,2014-02-03 09:00,2014-02-11 09:00,2014-02-03 09:00,2014-02-11 09:00,2015-02-09 15:00,2015-02-17 15:00,,PT_Normal,,,,,T8tCsplulUmaDQpdD+M/yg,abNnXiBw0UOyv7gOV1DZsA,,,N,0,0,,,2014-04-13 07:21,2014-04-14 17:03,admin,admin,
4041,144138,6971,40124,7842,0,N,N,N,CP_Phys,TT_Task,DT_FixedDrtn,TK_NotStart,CZA-TK-0601-1530,"Cutting, Fit-up and Welding of Roof Structure",8503,3186,0,70,0,2948.4597,2948.4597,70,0,0,0,,,,2015-02-17 15:00,2015-02-25 15:00,,2014-02-11 09:00,2014-02-19 09:00,2014-02-11 09:00,2014-02-19 09:00,2014-02-11 09:00,2014-02-19 09:00,2015-02-17 15:00,2015-02-25 15:00,,PT_Normal,,,,,ckwJ1Cn+ZEG/OQthLXHNaA,6ij/4ayKZ0C5x9Op/GdZPA,,,N,0,0,,,2014-04-13 07:21,2014-04-14 17:03,admin,admin,
4042,144139,6971,40124,7842,0,N,N,N,CP_Phys,TT_Task,DT_FixedDrtn,TK_NotStart,CZA-TK-0601-1540,Cutting of Compression Ring & Stairways,8503,3186,0,20,0,0,0,20,0,0,0,,,,2015-02-19 11:00,2015-02-22 11:00,,2014-02-12 15:00,2014-02-15 15:00,2014-02-12 15:00,2014-02-15 15:00,2014-02-12 15:00,2014-02-15 15:00,2015-02-19 11:00,2015-02-22 11:00,,PT_Normal,,,,,8sWaoNnBNkmsTg46owinXA,7et2L7mM60+QvGZb4A9SEA,,,N,0,0,,,2014-04-13 07:21,2014-04-14 17:03,admin,admin,
4043,144140,6971,40124,7842,0,N,N,N,CP_Phys,TT_Task,DT_FixedDrtn,TK_NotStart,CZA-TK-0601-1550,Cutting of Roof Plates,8503,3186,0,40,0,0,0,40,0,0,0,,,,2015-02-19 11:00,2015-02-24 11:00,,2014-02-12 15:00,2014-02-17 15:00,2014-02-12 15:00,2014-02-17 15:00,2014-02-12 15:00,2014-02-17 15:00,2015-02-19 11:00,2015-02-24 11:00,,PT_Normal,,,,,HNCoz9x+SkaFGXL5SDQUAg,a5vXyxZOKEmBNaqGD/9Ufw,,,N,0,0,,,2014-04-13 07:21,2014-04-14 17:03,admin,admin,
4044,144141,6971,40124,7842,0,N,N,N,CP_Phys,TT_Task,DT_FixedDrtn,TK_NotStart,CZA-TK-0601-1560,"Cutting, Fit-up and Welding of Roof Nozzles, Manholes and Other  Appurtanances",8503,3186,0,60,0,0,0,60,0,0,0,,,,2015-02-22 15:00,2015-03-01 15:00,,2014-02-16 09:00,2014-02-23 09:00,2014-02-16 09:00,2014-02-23 09:00,2014-02-16 09:00,2014-02-23 09:00,2015-02-22 15:00,2015-03-01 15:00,,PT_Normal,,,,,y8PYsYVYnUybXdYNbsOkpg,CGeX8XiZAkWfbqyYNr3xrQ,,,N,0,0,,,2014-04-13 07:21,2014-04-14 17:03,admin,admin,
4045,144142,6971,40124,7842,0,N,N,N,CP_Phys,TT_Task,DT_FixedDrtn,TK_NotStart,CZA-TK-0601-1570,"Cutting, Fit-up & Welding of Roof Platform, Gratings and Handrails",8503,3186,0,140,0,0,0,140,0,0,0,,,,2015-02-22 15:00,2015-03-10 15:00,,2014-02-16 09:00,2014-03-04 09:00,2014-02-16 09:00,2014-03-04 09:00,2014-02-16 09:00,2014-03-04 09:00,2015-02-22 15:00,2015-03-10 15:00,,PT_Normal,,,,,cQcoEDiA5kSl/QqI0HBAEQ,PHanlY48xkqlQvERd11urg,,,N,0,0,,,2014-04-13 07:21,2014-04-14 17:03,admin,admin,
4046,144143,6971,40124,7842,0,N,N,N,CP_Phys,TT_Task,DT_FixedDrtn,TK_NotStart,CZA-TK-0601-1580,"Cutting, Bevelling & Rolling of Shell No.7",8503,3186,0,20,0,1950.3981,1950.3981,20,0,0,0,,,,2015-03-10 15:00,2015-03-12 15:00,,2014-03-04 09:00,2014-03-06 09:00,2014-03-04 09:00,2014-03-06 09:00,2014-03-04 09:00,2014-03-06 09:00,2015-03-10 15:00,2015-03-12 15:00,,PT_Normal,,,,,cGsjHcjAak6PEP9qqxwGng,VFT7b4s1pkW4m4mVCM5AHw,,,N,0,0,,,2014-04-13 07:21,2014-04-14 17:03,admin,admin,
4047,144144,6971,40124,7842,0,N,N,N,CP_Phys,TT_Task,DT_FixedDrtn,TK_NotStart,CZA-TK-0601-1590,"Cutting, Bevelling & Rolling of Shell No.6",8503,3186,0,20,0,1950.3981,1950.3981,20,0,0,0,,,,2015-03-10 15:00,2015-03-12 15:00,,2014-03-04 09:00,2014-03-06 09:00,2014-03-04 09:00,2014-03-06 09:00,2014-03-04 09:00,2014-03-06 09:00,2015-03-10 15:00,2015-03-12 15:00,,PT_Normal,,,,,H/eIqxFZkkSNRSZ1db27ig,t8sgrMZo10+qGiiJ+z3B4A,,,N,0,0,,,2014-04-13 07:21,2014-04-14 17:03,admin,admin,
4048,144145,6971,40123,7842,0,N,N,N,CP_Phys,TT_Mile,DT_FixedDrtn,TK_NotStart,CZA-TK-0601-1670,Foundation Takeover From Client,,0,0,0,0,0,0,0,0,0,0,2014-04-20 00:00,,,2014-04-19 17:00,2014-04-19 17:00,,2014-04-20 07:00,2014-04-20 07:00,2014-04-20 07:00,2014-04-20 07:00,2014-04-20 07:00,2014-04-20 07:00,2014-04-19 17:00,2014-04-19 17:00,CS_MSO,PT_Normal,,,,,FLWGg7jHakid5TS1hGD3tw,mnskVQA3IECkohnfUvlLeA,,,N,0,0,,,2014-04-13 07:21,2014-04-13 08:43,admin,admin,
4049,144146,6971,40053,7842,0,N,N,N,CP_Phys,TT_Task,DT_FixedDrtn,TK_NotStart,CZA-TK-0601-2370,"Blasting & Painting (Bottom, Shell & Roof) Inside and Outside",8398,982,0,310,0,7778.491786,7778.491786,310,0,0,0,,,,2015-05-14 15:00,2015-06-20 15:00,,2015-01-20 13:00,2015-02-25 13:00,2015-01-20 13:00,2015-02-25 13:00,2015-01-20 13:00,2015-02-25 13:00,2015-05-14 15:00,2015-06-20 15:00,,PT_Normal,,,,,ul9FFsUboECmd0zC0u2r4Q,TFju1ultaUKrashYzvImVw,,,N,0,0,,,2014-04-13 07:21,2014-04-14 16:04,admin,admin,
4050,144147,6971,40112,7842,0,N,N,N,CP_Phys,TT_Task,DT_FixedDrtn,TK_NotStart,CZA-TK-0601-2360,"Filling, Holding and Draining",8398,982,0,250,0,12964.152976,12964.152976,250,0,0,0,,,,2015-04-15 15:00,2015-05-14 15:00,,2014-12-22 13:00,2015-01-20 13:00,2014-12-22 13:00,2015-01-20 13:00,2014-12-22 13:00,2015-01-20 13:00,2015-04-15 15:00,2015-05-14 15:00,,PT_Normal,,,,,0/275qds/k6afBhl5KQocw,ZKEraj1lVU6UBwDdtXWkGQ,,,N,0,0,,,2014-04-13 07:21,2014-04-14 16:04,admin,admin,
4051,144148,6971,40096,7842,0,N,N,N,CP_Phys,TT_Task,DT_FixedDrtn,TK_NotStart,CZA-TK-0601-2380,Tank Calibration,8398,982,0,50,0,2592.830595,2592.830595,50,0,0,0,,,,2015-06-20 15:00,2015-06-25 15:00,,2015-02-25 13:00,2015-03-03 13:00,2015-02-25 13:00,2015-03-03 13:00,2015-02-25 13:00,2015-03-03 13:00,2015-06-20 15:00,2015-06-25 15:00,,PT_Normal,,,,,LzyUE1iSSESatxQmMg9tSw,5xdZE+9rf0ORnGnRoIjgVg,,,N,0,0,,,2014-04-13 07:21,2014-04-14 16:04,admin,admin,
4052,144149,6971,40096,7842,0,N,N,N,CP_Phys,TT_Task,DT_FixedDrtn,TK_NotStart,CZA-TK-0601-2390,Tank Handover,8398,982,982,20,0,2592.830595,2592.830595,20,0,0,0,,,,2015-06-25 15:00,2015-06-28 15:00,,2015-03-03 13:00,2015-03-05 13:00,2015-03-03 13:00,2015-03-05 13:00,2015-03-03 13:00,2015-03-05 13:00,2015-06-25 15:00,2015-06-28 15:00,,PT_Normal,,,,,agZ6H9tgvkChDklFUmnDqQ,mWUZ2C7yH0Cb8a2GpzkZyQ,,,N,0,0,,,2014-04-13 07:21,2014-04-14 16:04,admin,admin,
4053,144150,6971,40666,7842,0,N,N,N,CP_Phys,TT_Task,DT_FixedDrtn,TK_NotStart,CZA-TK-0601-1680,Laying and Fit-up,8398,1092,0,20,0,192.270685,192.270685,20,60,0,60,,,,2014-08-25 09:00,2014-08-27 09:00,,2014-04-20 07:00,2014-04-21 17:00,2014-04-20 07:00,2014-04-21 17:00,2014-04-20 07:00,2014-04-21 17:00,2014-08-25 09:00,2014-08-27 09:00,,PT_Normal,,,,,8RixRWsJKUuEkZhIWTuWMQ,xulqWm3gLUODm8sdYxmygQ,,,N,0,0,,,2014-04-13 07:21,2014-04-14 16:04,admin,admin,
4054,144151,6971,40666,7842,0,N,N,N,CP_Phys,TT_Task,DT_FixedDrtn,TK_NotStart,CZA-TK-0601-1690,Welding,8398,1092,0,30,0,240.338356,240.338356,30,90,0,90,,,,2014-08-27 09:00,2014-08-31 09:00,,2014-04-22 07:00,2014-04-24 17:00,2014-04-22 07:00,2014-04-24 17:00,2014-04-22 07:00,2014-04-24 17:00,2014-08-27 09:00,2014-08-31 09:00,,PT_Normal,,,,,tUojfP9970CJnaa71eI5BA,iCdccXgfhkOKA0A8AGKJEA,,,N,0,0,,,2014-04-13 07:21,2014-04-14 16:04,admin,admin,
4055,144152,6971,40666,7842,0,N,N,N,CP_Phys,TT_Task,DT_FixedDrtn,TK_NotStart,CZA-TK-0601-1700,Inspection,8398,1092,0,50,0,48.067671,48.067671,50,0,0,0,,,,2014-08-25 09:00,2014-08-31 09:00,,2014-04-20 07:00,2014-04-24 17:00,2014-04-20 07:00,2014-04-24 17:00,2014-04-20 07:00,2014-04-24 17:00,2014-08-25 09:00,2014-08-31 09:00,,PT_Normal,,,,,h1ERU9VXV06ZQzcTIAcwqg,c5bNOm7VtEah+zZUgEwcjA,,,N,0,0,,,2014-04-13 07:21,2014-04-14 16:04,admin,admin,
4056,144153,6971,40667,7842,0,N,N,N,CP_Phys,TT_Task,DT_FixedDrtn,TK_NotStart,CZA-TK-0601-1710,Laying and Fit-up,8398,1092,0,40,0,855.323495,855.323495,40,120,0,120,,,,2014-08-31 09:00,2014-09-04 09:00,,2014-04-26 07:00,2014-04-29 17:00,2014-04-26 07:00,2014-04-29 17:00,2014-04-26 07:00,2014-04-29 17:00,2014-08-31 09:00,2014-09-04 09:00,,PT_Normal,,,,,Lq0yj+CCC0KbsUNJCMvt+w,BSgw5qbyeEOaOrK64r+R1w,,,N,0,0,,,2014-04-13 07:21,2014-04-14 16:04,admin,admin,
4057,144154,6971,40667,7842,0,N,N,N,CP_Phys,TT_Task,DT_FixedDrtn,TK_NotStart,CZA-TK-0601-1720,Welding,8398,1092,0,150,0,1069.154369,1069.154369,150,450,0,450,,,,2014-09-04 09:00,2014-09-22 09:00,,2014-04-30 07:00,2014-05-17 17:00,2014-04-30 07:00,2014-05-17 17:00,2014-04-30 07:00,2014-05-17 17:00,2014-09-04 09:00,2014-09-22 09:00,,PT_Normal,,,,,Zhc9O36Lu0Owxy8SY91ZzQ,D0ofCkS5YkqPR05wyCk+WQ,,,N,0,0,,,2014-04-13 07:21,2014-04-14 16:04,admin,admin,
4058,144155,6971,40667,7842,0,N,N,N,CP_Phys,TT_Task,DT_FixedDrtn,TK_NotStart,CZA-TK-0601-1730,Inspection,8398,1092,0,190,0,213.830874,213.830874,190,0,0,0,,,,2014-08-31 09:00,2014-09-22 09:00,,2014-04-26 07:00,2014-05-17 17:00,2014-04-26 07:00,2014-05-17 17:00,2014-04-26 07:00,2014-05-17 17:00,2014-08-31 09:00,2014-09-22 09:00,,PT_Normal,,,,,/QRki3nYqUqrhSzXzFDU4g,/WqOa+PkaEu2sIF9ubL1uQ,,,N,0,0,,,2014-04-13 07:21,2014-04-14 16:04,admin,admin,
4059,144156,6971,40668,7842,0,N,N,N,CP_Phys,TT_Task,DT_FixedDrtn,TK_NotStart,CZA-TK-0601-1740,Erection and Fit-up,8398,1092,0,20,0,853.835105,853.835105,20,60,0,60,,,,2014-09-22 09:00,2014-09-24 09:00,,2014-05-18 07:00,2014-05-19 17:00,2014-05-18 07:00,2014-05-19 17:00,2014-05-18 07:00,2014-05-19 17:00,2014-09-22 09:00,2014-09-24 09:00,,PT_Normal,,,,,6cb7ph1rU0aNCqPjWz2l+g,CMp4u5+AV0CppG22wk5jKA,,,N,0,0,,,2014-04-13 07:21,2014-04-14 16:04,admin,admin,
4060,144157,6971,40668,7842,0,N,N,N,CP_Phys,TT_Task,DT_FixedDrtn,TK_NotStart,CZA-TK-0601-1750,Welding,8398,1092,0,60,0,1067.293881,1067.293881,60,180,0,180,,,,2014-09-24 09:00,2014-10-01 09:00,,2014-05-20 07:00,2014-05-26 17:00,2014-05-20 07:00,2014-05-26 17:00,2014-05-20 07:00,2014-05-26 17:00,2014-09-24 09:00,2014-10-01 09:00,,PT_Normal,,,,,2lbHb6d9ekWfI5WDCuThvQ,5DZu8c7KO0acRUSjvFy6zA,,,N,0,0,,,2014-04-13 07:21,2014-04-14 16:04,admin,admin,
4061,144158,6971,40668,7842,0,N,N,N,CP_Phys,TT_Task,DT_FixedDrtn,TK_NotStart,CZA-TK-0601-1760,Inspection,8398,1092,0,80,0,213.458776,213.458776,80,0,0,0,,,,2014-09-22 09:00,2014-10-01 09:00,,2014-05-18 07:00,2014-05-26 17:00,2014-05-18 07:00,2014-05-26 17:00,2014-05-18 07:00,2014-05-26 17:00,2014-09-22 09:00,2014-10-01 09:00,,PT_Normal,,,,,EH6WhmQJz02Oj1IJHAlHeg,Wxl+HlTd0kKDQB5tehcgDQ,,,N,0,0,,,2014-04-13 07:21,2014-04-14 16:04,admin,admin,
4062,144159,6971,40669,7842,0,N,N,N,CP_Phys,TT_Task,DT_FixedDrtn,TK_NotStart,CZA-TK-0601-1770,Erection and Fit-up,8398,1092,0,20,0,470.984772,470.984772,20,60,0,60,,,,2014-10-01 09:00,2014-10-04 09:00,,2014-05-27 07:00,2014-05-28 17:00,2014-05-27 07:00,2014-05-28 17:00,2014-05-27 07:00,2014-05-28 17:00,2014-10-01 09:00,2014-10-04 09:00,,PT_Normal,,,,,czPfSHiZTEuPcJt41kDhMQ,bKkEommad0KemkSyNE8ADQ,,,N,0,0,,,2014-04-13 07:21,2014-04-14 16:04,admin,admin,
4063,144160,6971,40669,7842,0,N,N,N,CP_Phys,TT_Task,DT_FixedDrtn,TK_NotStart,CZA-TK-0601-1780,Welding,8398,1092,0,60,0,588.730965,588.730965,60,180,0,180,,,,2014-10-04 09:00,2014-10-11 09:00,,2014-05-29 07:00,2014-06-04 17:00,2014-05-29 07:00,2014-06-04 17:00,2014-05-29 07:00,2014-06-04 17:00,2014-10-04 09:00,2014-10-11 09:00,,PT_Normal,,,,,L9JPdNuQAEyuP1l7DUoIlg,aS37xsQfMEqXysnix43dQw,,,N,0,0,,,2014-04-13 07:21,2014-04-14 16:04,admin,admin,
4064,144161,6971,40669,7842,0,N,N,N,CP_Phys,TT_Task,DT_FixedDrtn,TK_NotStart,CZA-TK-0601-1790,Inspection,8398,1092,0,80,0,117.746193,117.746193,80,0,0,0,,,,2014-10-01 09:00,2014-10-11 09:00,,2014-05-27 07:00,2014-06-04 17:00,2014-05-27 07:00,2014-06-04 17:00,2014-05-27 07:00,2014-06-04 17:00,2014-10-01 09:00,2014-10-11 09:00,,PT_Normal,,,,,m7F1UwinkkyKYM0FplPbSg,RxOaCCvOOEyjJ+w7LssHOA,,,N,0,0,,,2014-04-13 07:21,2014-04-14 16:04,admin,admin,
4065,144162,6971,40670,7842,0,N,N,N,CP_Phys,TT_Task,DT_FixedDrtn,TK_NotStart,CZA-TK-0601-1800,"Cutting, Installation and Fit-up",8398,1092,0,20,0,0,0,20,60,0,60,,,,2014-10-11 09:00,2014-10-13 09:00,,2014-06-05 07:00,2014-06-07 17:00,2014-06-05 07:00,2014-06-07 17:00,2014-06-05 07:00,2014-06-07 17:00,2014-10-11 09:00,2014-10-13 09:00,,PT_Normal,,,,,T9O0OG8yOEuW5hcbVjtR4Q,ZJCiZmNAgEe1cEYbzKfw2g,,,N,0,0,,,2014-04-13 07:21,2014-04-14 16:04,admin,admin,
4066,144163,6971,40670,7842,0,N,N,N,CP_Phys,TT_Task,DT_FixedDrtn,TK_NotStart,CZA-TK-0601-1810,Welding,8398,1092,0,50,0,0,0,50,150,0,150,,,,2014-10-13 09:00,2014-10-19 09:00,,2014-06-08 07:00,2014-06-12 17:00,2014-06-08 07:00,2014-06-12 17:00,2014-06-08 07:00,2014-06-12 17:00,2014-10-13 09:00,2014-10-19 09:00,,PT_Normal,,,,,A55CIMiv6Ee6jgt0lqxkVw,j9+OLgoP00GWM6w8WZGn7w,,,N,0,0,,,2014-04-13 07:21,2014-04-14 16:04,admin,admin,
4067,144164,6971,40670,7842,0,N,N,N,CP_Phys,TT_Task,DT_FixedDrtn,TK_NotStart,CZA-TK-0601-1820,Inspection,8398,1092,0,70,0,0,0,70,0,0,0,,,,2014-10-11 09:00,2014-10-19 09:00,,2014-06-05 07:00,2014-06-12 17:00,2014-06-05 07:00,2014-06-12 17:00,2014-06-05 07:00,2014-06-12 17:00,2014-10-11 09:00,2014-10-19 09:00,,PT_Normal,,,,,tr4sbF41SUmiHc0VRdMXwg,3FAjhArYhE+3dyk76S9JaA,,,N,0,0,,,2014-04-13 07:21,2014-04-14 16:04,admin,admin,
4068,144165,6971,40671,7842,0,N,N,N,CP_Phys,TT_Task,DT_FixedDrtn,TK_NotStart,CZA-TK-0601-1830,Erection and Fit-up,8398,1092,0,20,0,0,0,20,0,0,0,,,,2014-10-15 09:00,2014-10-18 09:00,,2014-06-10 07:00,2014-06-11 17:00,2014-06-10 07:00,2014-06-11 17:00,2014-06-10 07:00,2014-06-11 17:00,2014-10-15 09:00,2014-10-18 09:00,,PT_Normal,,,,,5SEOjZFErEmU0l0CJksu5A,R/2/6LBImE2B60qqAtqeqw,,,N,0,0,,,2014-04-13 07:21,2014-04-14 16:04,admin,admin,
4069,144166,6971,40671,7842,0,N,N,N,CP_Phys,TT_Task,DT_FixedDrtn,TK_NotStart,CZA-TK-0601-1840,Welding,8398,1092,0,20,0,0,0,20,60,0,60,,,,2014-10-18 09:00,2014-10-20 09:00,,2014-06-12 07:00,2014-06-14 17:00,2014-06-12 07:00,2014-06-14 17:00,2014-06-12 07:00,2014-06-14 17:00,2014-10-18 09:00,2014-10-20 09:00,,PT_Normal,,,,,eUK2yLyt/U6s2nJOHQcPkg,hJf660remEG/0y9uunelLw,,,N,0,0,,,2014-04-13 07:21,2014-04-14 16:04,admin,admin,
4070,144167,6971,40671,7842,0,N,N,N,CP_Phys,TT_Task,DT_FixedDrtn,TK_NotStart,CZA-TK-0601-1850,Inspection,8398,1092,0,40,0,0,0,40,0,0,0,,,,2014-10-15 09:00,2014-10-20 09:00,,2014-06-10 07:00,2014-06-14 17:00,2014-06-10 07:00,2014-06-14 17:00,2014-06-10 07:00,2014-06-14 17:00,2014-10-15 09:00,2014-10-20 09:00,,PT_Normal,,,,,SOwy4Q2F1U2Gogv+1BEK/w,epmaE3+AC0iwDyo3M1x3XQ,,,N,0,0,,,2014-04-13 07:21,2014-04-14 16:04,admin,admin,
4071,144168,6971,40672,7842,0,N,N,N,CP_Phys,TT_Task,DT_FixedDrtn,TK_NotStart,CZA-TK-0601-1860,Laying and Fit-up,8398,1092,0,40,0,734.436192,734.436192,40,120,0,120,,,,2014-10-20 09:00,2014-10-25 09:00,,2014-06-15 07:00,2014-06-18 17:00,2014-06-15 07:00,2014-06-18 17:00,2014-06-15 07:00,2014-06-18 17:00,2014-10-20 09:00,2014-10-25 09:00,,PT_Normal,,,,,NJ1XOavekEaCsd+g5jtrag,PyyWoyLROkS8GzxUXLMtQw,,,N,0,0,,,2014-04-13 07:21,2014-04-14 16:04,admin,admin,
4072,144169,6971,40672,7842,0,N,N,N,CP_Phys,TT_Task,DT_FixedDrtn,TK_NotStart,CZA-TK-0601-1870,Welding,8398,1092,0,100,0,918.045239,918.045239,100,300,0,300,,,,2014-10-25 09:00,2014-11-05 09:00,,2014-06-19 07:00,2014-06-30 17:00,2014-06-19 07:00,2014-06-30 17:00,2014-06-19 07:00,2014-06-30 17:00,2014-10-25 09:00,2014-11-05 09:00,,PT_Normal,,,,,YeKsRFTB6EmOWhVt3jQzRQ,6YW7M0PME0KOpzJepML3rg,,,N,0,0,,,2014-04-13 07:21,2014-04-14 16:04,admin,admin,
4073,144170,6971,40672,7842,0,N,N,N,CP_Phys,TT_Task,DT_FixedDrtn,TK_NotStart,CZA-TK-0601-1880,Inspection,8398,1092,0,140,0,183.609048,183.609048,140,0,0,0,,,,2014-10-20 09:00,2014-11-05 09:00,,2014-06-15 07:00,2014-06-30 17:00,2014-06-15 07:00,2014-06-30 17:00,2014-06-15 07:00,2014-06-30 17:00,2014-10-20 09:00,2014-11-05 09:00,,PT_Normal,,,,,GsIdQOfElkC4z7IPazHmAA,zNgi8WmM/kGx9e9uV6Oqpw,,,N,0,0,,,2014-04-13 07:21,2014-04-14 16:04,admin,admin,
4074,144171,6971,40673,7842,0,N,N,N,CP_Phys,TT_Task,DT_FixedDrtn,TK_NotStart,CZA-TK-0601-1890,"Laying, Cutting all Holes and Fit-up",8398,1092,0,40,0,508.492921,508.492921,40,0,0,0,,,,2014-11-05 09:00,2014-11-10 09:00,,2014-07-01 07:00,2014-07-05 17:00,2014-07-01 07:00,2014-07-05 17:00,2014-07-01 07:00,2014-07-05 17:00,2014-11-05 09:00,2014-11-10 09:00,,PT_Normal,,,,,eeI4VjSYsE+K79BPYwiCfA,pt1EXkiPNEWl/caxGoNHkA,,,N,0,0,,,2014-04-13 07:21,2014-04-14 16:04,admin,admin,
4075,144172,6971,40673,7842,0,N,N,N,CP_Phys,TT_Task,DT_FixedDrtn,TK_NotStart,CZA-TK-0601-1900,Welding,8398,1132,40,110,0,635.616152,635.616152,110,330,0,330,,,,2014-11-10 09:00,2014-11-23 09:00,,2014-07-01 07:00,2014-07-13 17:00,2014-07-01 07:00,2014-07-13 17:00,2014-07-01 07:00,2014-07-13 17:00,2014-11-10 09:00,2014-11-23 09:00,,PT_Normal,,,,,XBxDXOT7aEifc4/AOASCqg,nlwCCtFDM0eGsZIJNDRVJA,,,N,0,0,,,2014-04-13 07:21,2014-04-14 16:04,admin,admin,
4076,144173,6971,40673,7842,0,N,N,N,CP_Phys,TT_Task,DT_FixedDrtn,TK_NotStart,CZA-TK-0601-1910,Inspection,8398,1092,0,150,0,127.12323,127.12323,150,0,0,0,,,,2014-11-05 09:00,2014-11-23 09:00,,2014-07-01 07:00,2014-07-17 17:00,2014-07-01 07:00,2014-07-17 17:00,2014-07-01 07:00,2014-07-17 17:00,2014-11-05 09:00,2014-11-23 09:00,,PT_Normal,,,,,p66fJphYfkeOK8yH9wo/8g,64qr7GRKkESDXV0S1YHwLw,,,N,0,0,,,2014-04-13 07:21,2014-04-14 16:04,admin,admin,
4077,144174,6971,40674,7842,0,N,N,N,CP_Phys,TT_Task,DT_FixedDrtn,TK_NotStart,CZA-TK-0601-1920,Erection and Fit-up,8398,1092,0,50,0,1290.761305,1290.761305,50,150,0,150,,,,2014-11-23 09:00,2014-11-29 09:00,,2014-07-19 07:00,2014-07-23 17:00,2014-07-19 07:00,2014-07-23 17:00,2014-07-19 07:00,2014-07-23 17:00,2014-11-23 09:00,2014-11-29 09:00,,PT_Normal,,,,,+4IGtv7A/kOprL7kQHz4qg,RRrQtsD91U2AkHHYNaV/ow,,,N,0,0,,,2014-04-13 07:21,2014-04-14 16:04,admin,admin,
4078,144175,6971,40674,7842,0,N,N,N,CP_Phys,TT_Task,DT_FixedDrtn,TK_NotStart,CZA-TK-0601-1930,Welding,8398,1092,0,90,0,1613.451631,1613.451631,90,270,0,270,,,,2014-11-29 09:00,2014-12-09 09:00,,2014-07-24 07:00,2014-08-03 17:00,2014-07-24 07:00,2014-08-03 17:00,2014-07-24 07:00,2014-08-03 17:00,2014-11-29 09:00,2014-12-09 09:00,,PT_Normal,,,,,Syi31EeRBEK9MgnnC0lVNQ,97aMADOrMku57Y8ZCReBVw,,,N,0,0,,,2014-04-13 07:21,2014-04-14 16:04,admin,admin,
4079,144176,6971,40674,7842,0,N,N,N,CP_Phys,TT_Task,DT_FixedDrtn,TK_NotStart,CZA-TK-0601-1940,Inspection,8398,1092,0,140,0,322.690326,322.690326,140,0,0,0,,,,2014-11-23 09:00,2014-12-09 09:00,,2014-07-19 07:00,2014-08-03 17:00,2014-07-19 07:00,2014-08-03 17:00,2014-07-19 07:00,2014-08-03 17:00,2014-11-23 09:00,2014-12-09 09:00,,PT_Normal,,,,,IxUlWj9yzUi7OCrGdMCtJA,PV2nmga2zEeV7vImxm3Nvg,,,N,0,0,,,2014-04-13 07:21,2014-04-14 16:04,admin,admin,
4080,144177,6971,40675,7842,0,N,N,N,CP_Phys,TT_Task,DT_FixedDrtn,TK_NotStart,CZA-TK-0601-1950,Laying and Fit-up,8398,1092,0,20,0,0,0,20,60,0,60,,,,2014-12-09 09:00,2014-12-11 09:00,,2014-08-04 07:00,2014-08-05 17:00,2014-08-04 07:00,2014-08-05 17:00,2014-08-04 07:00,2014-08-05 17:00,2014-12-09 09:00,2014-12-11 09:00,,PT_Normal,,,,,jBU8iJuQwkWkv0fCC+ZY8A,00d1Hthfq0yxwLZpuBKtOw,,,N,0,0,,,2014-04-13 07:21,2014-04-14 16:04,admin,admin,
4081,144178,6971,40675,7842,0,N,N,N,CP_Phys,TT_Task,DT_FixedDrtn,TK_NotStart,CZA-TK-0601-1960,Welding,8398,1092,0,60,0,0,0,60,180,0,180,,,,2014-12-11 09:00,2014-12-18 09:00,,2014-08-06 07:00,2014-08-12 17:00,2014-08-06 07:00,2014-08-12 17:00,2014-08-06 07:00,2014-08-12 17:00,2014-12-11 09:00,2014-12-18 09:00,,PT_Normal,,,,,XtX5oWEBXkyLKf+vrWXpnw,I0hFz76PfEq2WiqZKEXapw,,,N,0,0,,,2014-04-13 07:21,2014-04-14 16:04,admin,admin,
4082,144179,6971,40675,7842,0,N,N,N,CP_Phys,TT_Task,DT_FixedDrtn,TK_NotStart,CZA-TK-0601-1970,Inspection,8398,1092,0,80,0,0,0,80,0,0,0,,,,2014-12-09 09:00,2014-12-18 09:00,,2014-08-04 07:00,2014-08-12 17:00,2014-08-04 07:00,2014-08-12 17:00,2014-08-04 07:00,2014-08-12 17:00,2014-12-09 09:00,2014-12-18 09:00,,PT_Normal,,,,,u/gpU8Ri80SfS9ZKWLPRUA,gQR8HeHRVUqn5QrwDxoASQ,,,N,0,0,,,2014-04-13 07:21,2014-04-14 16:04,admin,admin,
4083,144180,6971,40676,7842,0,N,N,N,CP_Phys,TT_Task,DT_FixedDrtn,TK_NotStart,CZA-TK-0601-1980,Laying and Fit-up,8398,1092,0,30,0,0,0,30,90,0,90,,,,2014-12-18 09:00,2014-12-22 09:00,,2014-08-13 07:00,2014-08-16 17:00,2014-08-13 07:00,2014-08-16 17:00,2014-08-13 07:00,2014-08-16 17:00,2014-12-18 09:00,2014-12-22 09:00,,PT_Normal,,,,,dw7a7wVXlUShiRoFvguncA,jzTIWMa3Y0y6WfmGwjkqkQ,,,N,0,0,,,2014-04-13 07:21,2014-04-14 16:04,admin,admin,
4084,144181,6971,40676,7842,0,N,N,N,CP_Phys,TT_Task,DT_FixedDrtn,TK_NotStart,CZA-TK-0601-1990,Welding,8398,1092,0,70,0,0,0,70,210,0,210,,,,2014-12-22 09:00,2014-12-30 09:00,,2014-08-17 07:00,2014-08-24 17:00,2014-08-17 07:00,2014-08-24 17:00,2014-08-17 07:00,2014-08-24 17:00,2014-12-22 09:00,2014-12-30 09:00,,PT_Normal,,,,,tTXe1wvrFE2MP2q157CgrQ,hREzCLLzIk2vC4KR7lx/FA,,,N,0,0,,,2014-04-13 07:21,2014-04-14 16:04,admin,admin,
4085,144182,6971,40676,7842,0,N,N,N,CP_Phys,TT_Task,DT_FixedDrtn,TK_NotStart,CZA-TK-0601-2000,Inspection,8398,1092,0,100,0,0,0,100,0,0,0,,,,2014-12-18 09:00,2014-12-30 09:00,,2014-08-13 07:00,2014-08-24 17:00,2014-08-13 07:00,2014-08-24 17:00,2014-08-13 07:00,2014-08-24 17:00,2014-12-18 09:00,2014-12-30 09:00,,PT_Normal,,,,,0h0S8zV9ukevBkp1tKDoGw,HmF0j9x7CECfz7NHcRz+0Q,,,N,0,0,,,2014-04-13 07:21,2014-04-14 16:04,admin,admin,
4086,144183,6971,40677,7842,0,N,N,N,CP_Phys,TT_Task,DT_FixedDrtn,TK_NotStart,CZA-TK-0601-2010,"Cutting,lnstallation and Fit-up",8398,1092,0,20,0,0,0,20,60,0,60,,,,2014-12-30 09:00,2015-01-01 09:00,,2014-08-25 07:00,2014-08-26 17:00,2014-08-25 07:00,2014-08-26 17:00,2014-08-25 07:00,2014-08-26 17:00,2014-12-30 09:00,2015-01-01 09:00,,PT_Normal,,,,,QS+lzq5XBka7Bbp6MoJAgw,3a3b8uS5eky2QO55V8ORjw,,,N,0,0,,,2014-04-13 07:21,2014-04-14 16:04,admin,admin,
4087,144184,6971,40677,7842,0,N,N,N,CP_Phys,TT_Task,DT_FixedDrtn,TK_NotStart,CZA-TK-0601-2020,Welding,8398,1092,0,50,0,0,0,50,150,0,150,,,,2015-01-01 09:00,2015-01-07 09:00,,2014-08-27 07:00,2014-09-01 17:00,2014-08-27 07:00,2014-09-01 17:00,2014-08-27 07:00,2014-09-01 17:00,2015-01-01 09:00,2015-01-07 09:00,,PT_Normal,,,,,ce1QOBw2a0iOVcxxE55XTw,T+UsdpAUL0OLPwFLpZN12w,,,N,0,0,,,2014-04-13 07:21,2014-04-14 16:04,admin,admin,
4088,144185,6971,40677,7842,0,N,N,N,CP_Phys,TT_Task,DT_FixedDrtn,TK_NotStart,CZA-TK-0601-2030,Inspection,8398,1092,0,70,0,0,0,70,0,0,0,,,,2014-12-30 09:00,2015-01-07 09:00,,2014-08-25 07:00,2014-09-01 17:00,2014-08-25 07:00,2014-09-01 17:00,2014-08-25 07:00,2014-09-01 17:00,2014-12-30 09:00,2015-01-07 09:00,,PT_Normal,,,,,tsZ3HIHD3Ua5k2SUeGPrpA,sHc/YHGjUU27VYxq5P2f6Q,,,N,0,0,,,2014-04-13 07:21,2014-04-14 16:04,admin,admin,
4089,144186,6971,40678,7842,0,N,N,N,CP_Phys,TT_Task,DT_FixedDrtn,TK_NotStart,CZA-TK-0601-2040,Erection and Fit-up,8398,1092,0,30,0,0,0,30,90,0,90,,,,2015-01-07 09:00,2015-01-11 09:00,,2014-09-02 07:00,2014-09-04 17:00,2014-09-02 07:00,2014-09-04 17:00,2014-09-02 07:00,2014-09-04 17:00,2015-01-07 09:00,2015-01-11 09:00,,PT_Normal,,,,,ECf2oYpRTkq4SvZH4KjD3g,9N/d6g/7kU2Ydru02ck8Yw,,,N,0,0,,,2014-04-13 07:21,2014-04-14 16:04,admin,admin,
4090,144187,6971,40678,7842,0,N,N,N,CP_Phys,TT_Task,DT_FixedDrtn,TK_NotStart,CZA-TK-0601-2050,Welding,8398,1092,0,70,0,0,0,70,210,0,210,,,,2015-01-11 09:00,2015-01-19 09:00,,2014-09-06 07:00,2014-09-13 17:00,2014-09-06 07:00,2014-09-13 17:00,2014-09-06 07:00,2014-09-13 17:00,2015-01-11 09:00,2015-01-19 09:00,,PT_Normal,,,,,T3j/fOE9UUaZwkFajMcJxA,Ybs0mU1gCECDgvrMBx03yQ,,,N,0,0,,,2014-04-13 07:21,2014-04-14 16:04,admin,admin,
4091,144188,6971,40678,7842,0,N,N,N,CP_Phys,TT_Task,DT_FixedDrtn,TK_NotStart,CZA-TK-0601-2060,Inspection,8398,1092,0,100,0,0,0,100,0,0,0,,,,2015-01-07 09:00,2015-01-19 09:00,,2014-09-02 07:00,2014-09-13 17:00,2014-09-02 07:00,2014-09-13 17:00,2014-09-02 07:00,2014-09-13 17:00,2015-01-07 09:00,2015-01-19 09:00,,PT_Normal,,,,,ivFb35WS7UWDI87/0/arYw,OHfa+HVl90igO8OUXACeeg,,,N,0,0,,,2014-04-13 07:21,2014-04-14 16:04,admin,admin,
4092,144189,6971,40679,7842,0,N,N,N,CP_Phys,TT_Task,DT_FixedDrtn,TK_NotStart,CZA-TK-0601-2070,"Jacking, Erection and Fit-up",8398,1092,0,20,0,853.835105,853.835105,20,60,0,60,,,,2015-01-19 09:00,2015-01-21 09:00,,2014-09-14 07:00,2014-09-15 17:00,2014-09-14 07:00,2014-09-15 17:00,2014-09-14 07:00,2014-09-15 17:00,2015-01-19 09:00,2015-01-21 09:00,,PT_Normal,,,,,5h/7NvgU30aSQEiV8sefbw,6FvRQkPlt0G/mcmtkE2zOQ,,,N,0,0,,,2014-04-13 07:21,2014-04-14 16:04,admin,admin,
4093,144190,6971,40679,7842,0,N,N,N,CP_Phys,TT_Task,DT_FixedDrtn,TK_NotStart,CZA-TK-0601-2080,Welding,8398,1092,0,60,0,1067.293881,1067.293881,60,180,0,180,,,,2015-01-21 09:00,2015-01-28 09:00,,2014-09-16 07:00,2014-09-22 17:00,2014-09-16 07:00,2014-09-22 17:00,2014-09-16 07:00,2014-09-22 17:00,2015-01-21 09:00,2015-01-28 09:00,,PT_Normal,,,,,TUxcoCfY1E6Xt3epQG3KpA,tYBbgHj65UGCfMvGR+041w,,,N,0,0,,,2014-04-13 07:21,2014-04-14 16:04,admin,admin,
4094,144191,6971,40679,7842,0,N,N,N,CP_Phys,TT_Task,DT_FixedDrtn,TK_NotStart,CZA-TK-0601-2090,Inspection,8398,1092,0,80,0,213.458776,213.458776,80,0,0,0,,,,2015-01-19 09:00,2015-01-28 09:00,,2014-09-14 07:00,2014-09-22 17:00,2014-09-14 07:00,2014-09-22 17:00,2014-09-14 07:00,2014-09-22 17:00,2015-01-19 09:00,2015-01-28 09:00,,PT_Normal,,,,,MNJUXfjGn0iOPKrZHOxsQg,0XteX6dm4EOeK8fvhcN8+g,,,N,0,0,,,2014-04-13 07:21,2014-04-14 16:04,admin,admin,
4095,144192,6971,40680,7842,0,N,N,N,CP_Phys,TT_Task,DT_FixedDrtn,TK_NotStart,CZA-TK-0601-2100,"Jacking,Erection and Fit-up",8398,1092,0,20,0,853.835105,853.835105,20,60,0,60,,,,2015-01-28 09:00,2015-01-31 09:00,,2014-09-23 07:00,2014-09-24 17:00,2014-09-23 07:00,2014-09-24 17:00,2014-09-23 07:00,2014-09-24 17:00,2015-01-28 09:00,2015-01-31 09:00,,PT_Normal,,,,,tOekVHBN9kmsWGbCE78ruQ,755/ISNeNU6GmfwEyxCs3g,,,N,0,0,,,2014-04-13 07:21,2014-04-14 16:04,admin,admin,
4096,144193,6971,40680,7842,0,N,N,N,CP_Phys,TT_Task,DT_FixedDrtn,TK_NotStart,CZA-TK-0601-2110,Welding,8398,1092,0,60,0,1067.293881,1067.293881,60,180,0,180,,,,2015-01-31 09:00,2015-02-07 09:00,,2014-09-25 07:00,2014-10-01 17:00,2014-09-25 07:00,2014-10-01 17:00,2014-09-25 07:00,2014-10-01 17:00,2015-01-31 09:00,2015-02-07 09:00,,PT_Normal,,,,,LB1tHfPeHE6qgL1DwvScgg,PQWGBoM5jECW7V/88alebA,,,N,0,0,,,2014-04-13 07:21,2014-04-14 16:04,admin,admin,
4097,144194,6971,40680,7842,0,N,N,N,CP_Phys,TT_Task,DT_FixedDrtn,TK_NotStart,CZA-TK-0601-2120,Inspection,8398,1092,0,80,0,213.458776,213.458776,80,0,0,0,,,,2015-01-28 09:00,2015-02-07 09:00,,2014-09-23 07:00,2014-10-01 17:00,2014-09-23 07:00,2014-10-01 17:00,2014-09-23 07:00,2014-10-01 17:00,2015-01-28 09:00,2015-02-07 09:00,,PT_Normal,,,,,Uv6qHxPmA06nXc9SpKkVHQ,jWf1N0q9ZkikmCVy6i6Rdw,,,N,0,0,,,2014-04-13 07:21,2014-04-14 16:04,admin,admin,
4098,144195,6971,40681,7842,0,N,N,N,CP_Phys,TT_Task,DT_FixedDrtn,TK_NotStart,CZA-TK-0601-2130,"Jacking,Erection and Fit-up",8398,1092,0,20,0,1174.104482,1174.104482,20,60,0,60,,,,2015-02-07 09:00,2015-02-09 09:00,,2014-10-02 07:00,2014-10-04 17:00,2014-10-02 07:00,2014-10-04 17:00,2014-10-02 07:00,2014-10-04 17:00,2015-02-07 09:00,2015-02-09 09:00,,PT_Normal,,,,,UKz5L84V0UaRTIcBijSI1g,EA5p885XM0mbyZBqDTLjPw,,,N,0,0,,,2014-04-13 07:21,2014-04-14 16:04,admin,admin,
4099,144196,6971,40681,7842,0,N,N,N,CP_Phys,TT_Task,DT_FixedDrtn,TK_NotStart,CZA-TK-0601-2140,Welding,8398,1092,0,60,0,1467.630602,1467.630602,60,180,0,180,,,,2015-02-09 09:00,2015-02-16 09:00,,2014-10-05 07:00,2014-10-11 17:00,2014-10-05 07:00,2014-10-11 17:00,2014-10-05 07:00,2014-10-11 17:00,2015-02-09 09:00,2015-02-16 09:00,,PT_Normal,,,,,yUfEDqX6f0+ewMhJ8pV2Sw,n7YT2ISePUKAfGmPL0dPEg,,,N,0,0,,,2014-04-13 07:21,2014-04-14 16:04,admin,admin,
4100,144197,6971,40681,7842,0,N,N,N,CP_Phys,TT_Task,DT_FixedDrtn,TK_NotStart,CZA-TK-0601-2150,Inspection,8398,1092,0,80,0,293.52612,293.52612,80,0,0,0,,,,2015-02-07 09:00,2015-02-16 09:00,,2014-10-02 07:00,2014-10-11 17:00,2014-10-02 07:00,2014-10-11 17:00,2014-10-02 07:00,2014-10-11 17:00,2015-02-07 09:00,2015-02-16 09:00,,PT_Normal,,,,,EaUPTKaBzEKgNxErkeeg6g,d9tKvQvh7UW+qu050Vuu3g,,,N,0,0,,,2014-04-13 07:21,2014-04-14 16:04,admin,admin,
4101,144198,6971,40682,7842,0,N,N,N,CP_Phys,TT_Task,DT_FixedDrtn,TK_NotStart,CZA-TK-0601-2160,"Jacking, Erection and Fit-up",8398,1092,0,20,0,1494.412339,1494.412339,20,60,0,60,,,,2015-02-16 09:00,2015-02-18 09:00,,2014-10-12 07:00,2014-10-13 17:00,2014-10-12 07:00,2014-10-13 17:00,2014-10-12 07:00,2014-10-13 17:00,2015-02-16 09:00,2015-02-18 09:00,,PT_Normal,,,,,LWb7ZvVxYUKcmnelxlzyag,pDIhgopLIkCwD0749IHjmA,,,N,0,0,,,2014-04-13 07:21,2014-04-14 16:04,admin,admin,
4102,144199,6971,40682,7842,0,N,N,N,CP_Phys,TT_Task,DT_FixedDrtn,TK_NotStart,CZA-TK-0601-2170,Welding,8398,1092,0,60,0,1868.015424,1868.015424,60,180,0,180,,,,2015-02-18 09:00,2015-02-25 09:00,,2014-10-14 07:00,2014-10-20 17:00,2014-10-14 07:00,2014-10-20 17:00,2014-10-14 07:00,2014-10-20 17:00,2015-02-18 09:00,2015-02-25 09:00,,PT_Normal,,,,,Z2eC+fXnXE+d5Lklr1cOvw,+yuvZMjcw0OLROjNj/+MnA,,,N,0,0,,,2014-04-13 07:21,2014-04-14 16:04,admin,admin,
4103,144200,6971,40682,7842,0,N,N,N,CP_Phys,TT_Task,DT_FixedDrtn,TK_NotStart,CZA-TK-0601-2180,Inspection,8398,1092,0,80,0,373.603085,373.603085,80,0,0,0,,,,2015-02-16 09:00,2015-02-25 09:00,,2014-10-12 07:00,2014-10-20 17:00,2014-10-12 07:00,2014-10-20 17:00,2014-10-12 07:00,2014-10-20 17:00,2015-02-16 09:00,2015-02-25 09:00,,PT_Normal,,,,,HNhp5XMCfEOSX21jZeQeUQ,nKy8fRjBNUe7JBWKKUcnWQ,,,N,0,0,,,2014-04-13 07:21,2014-04-14 16:04,admin,admin,
4104,144201,6971,40683,7842,0,N,N,N,CP_Phys,TT_Task,DT_FixedDrtn,TK_NotStart,CZA-TK-0601-2190,"Jacking, Erection and Fit-up",8398,1092,0,20,0,1707.979497,1707.979497,20,60,0,60,,,,2015-02-25 09:00,2015-02-28 09:00,,2014-10-21 07:00,2014-10-22 17:00,2014-10-21 07:00,2014-10-22 17:00,2014-10-21 07:00,2014-10-22 17:00,2015-02-25 09:00,2015-02-28 09:00,,PT_Normal,,,,,ud7Gonqcs0iM59IgQggPJQ,3ts+4CVJX0CMVGnW+XSNww,,,N,0,0,,,2014-04-13 07:21,2014-04-14 16:04,admin,admin,
4105,144202,6971,40683,7842,0,N,N,N,CP_Phys,TT_Task,DT_FixedDrtn,TK_NotStart,CZA-TK-0601-2200,Welding,8398,1092,0,60,0,2134.974372,2134.974372,60,180,0,180,,,,2015-02-28 09:00,2015-03-07 09:00,,2014-10-23 07:00,2014-10-29 17:00,2014-10-23 07:00,2014-10-29 17:00,2014-10-23 07:00,2014-10-29 17:00,2015-02-28 09:00,2015-03-07 09:00,,PT_Normal,,,,,Tk2mQIeaFkOxu+YN7qlmKg,tZANn7lZiUSNQO2LjpIFgA,,,N,0,0,,,2014-04-13 07:21,2014-04-14 16:04,admin,admin,
4106,144203,6971,40683,7842,0,N,N,N,CP_Phys,TT_Task,DT_FixedDrtn,TK_NotStart,CZA-TK-0601-2210,Inspection,8398,1092,0,80,0,426.994874,426.994874,80,0,0,0,,,,2015-02-25 09:00,2015-03-07 09:00,,2014-10-21 07:00,2014-10-29 17:00,2014-10-21 07:00,2014-10-29 17:00,2014-10-21 07:00,2014-10-29 17:00,2015-02-25 09:00,2015-03-07 09:00,,PT_Normal,,,,,d2C4Grcf3UuNyBdv1T0elw,UxHOdJmZ9EGU1EXStwHmDg,,,N,0,0,,,2014-04-13 07:21,2014-04-14 16:04,admin,admin,
4107,144204,6971,40684,7842,0,N,N,N,CP_Phys,TT_Task,DT_FixedDrtn,TK_NotStart,CZA-TK-0601-2220,"Jacking, Erection and Fit-up",8398,1092,0,20,0,2028.357618,2028.357618,20,60,0,60,,,,2015-03-07 09:00,2015-03-09 09:00,,2014-10-30 07:00,2014-11-01 17:00,2014-10-30 07:00,2014-11-01 17:00,2014-10-30 07:00,2014-11-01 17:00,2015-03-07 09:00,2015-03-09 09:00,,PT_Normal,,,,,kcNXOuDwWkieDNPZYAbgnA,XzIE5vr9L0+AIvNXNFWGTQ,,,N,0,0,,,2014-04-13 07:21,2014-04-14 16:04,admin,admin,
4108,144205,6971,40684,7842,0,N,N,N,CP_Phys,TT_Task,DT_FixedDrtn,TK_NotStart,CZA-TK-0601-2230,Welding,8398,1092,0,60,0,2535.447022,2535.447022,60,180,0,180,,,,2015-03-09 09:00,2015-03-16 09:00,,2014-11-02 07:00,2014-11-08 17:00,2014-11-02 07:00,2014-11-08 17:00,2014-11-02 07:00,2014-11-08 17:00,2015-03-09 09:00,2015-03-16 09:00,,PT_Normal,,,,,SDt0nuoQg0CTFWNbBBaJLg,N+PyHWfk/EqO2ZopU+KlQA,,,N,0,0,,,2014-04-13 07:21,2014-04-14 16:04,admin,admin,
4109,144206,6971,40684,7842,0,N,N,N,CP_Phys,TT_Task,DT_FixedDrtn,TK_NotStart,CZA-TK-0601-2240,Inspection,8398,1092,0,80,0,507.089404,507.089404,80,0,0,0,,,,2015-03-07 09:00,2015-03-16 09:00,,2014-10-30 07:00,2014-11-08 17:00,2014-10-30 07:00,2014-11-08 17:00,2014-10-30 07:00,2014-11-08 17:00,2015-03-07 09:00,2015-03-16 09:00,,PT_Normal,,,,,76BHiYSgREmegVWZ+ZOYzQ,8uHLhQYq5UC6s1FJnCNeEw,,,N,0,0,,,2014-04-13 07:21,2014-04-14 16:04,admin,admin,
4110,144207,6971,40685,7842,0,N,N,N,CP_Phys,TT_Task,DT_FixedDrtn,TK_NotStart,CZA-TK-0601-2250,"Jacking, Erection and Fit-up",8398,1092,0,20,0,1044.192013,1044.192013,20,60,0,60,,,,2015-03-16 09:00,2015-03-18 09:00,,2014-11-09 07:00,2014-11-10 17:00,2014-11-09 07:00,2014-11-10 17:00,2014-11-09 07:00,2014-11-10 17:00,2015-03-16 09:00,2015-03-18 09:00,,PT_Normal,,,,,P+Pjpl7IHE2MoLdMj2r6HQ,X8HzS5whCUKsuUOQKJp9Yg,,,N,0,0,,,2014-04-13 07:21,2014-04-14 16:04,admin,admin,
4111,144208,6971,40685,7842,0,N,N,N,CP_Phys,TT_Task,DT_FixedDrtn,TK_NotStart,CZA-TK-0601-2260,Welding,8398,1092,0,60,0,1305.240016,1305.240016,60,180,0,180,,,,2015-03-18 09:00,2015-03-25 09:00,,2014-11-11 07:00,2014-11-17 17:00,2014-11-11 07:00,2014-11-17 17:00,2014-11-11 07:00,2014-11-17 17:00,2015-03-18 09:00,2015-03-25 09:00,,PT_Normal,,,,,fYFXJuM1iES8sXfJ/ZJANw,iVsHcpSryEWgsvYyZYCA8w,,,N,0,0,,,2014-04-13 07:21,2014-04-14 16:04,admin,admin,
4112,144209,6971,40685,7842,0,N,N,N,CP_Phys,TT_Task,DT_FixedDrtn,TK_NotStart,CZA-TK-0601-2270,Inspection,8398,1092,0,80,0,261.048003,261.048003,80,0,0,0,,,,2015-03-16 09:00,2015-03-25 09:00,,2014-11-09 07:00,2014-11-17 17:00,2014-11-09 07:00,2014-11-17 17:00,2014-11-09 07:00,2014-11-17 17:00,2015-03-16 09:00,2015-03-25 09:00,,PT_Normal,,,,,NxwaU8vdv0+UKHL6KLrVHg,5xkPrJuk2k6zoNViZ85urw,,,N,0,0,,,2014-04-13 07:21,2014-04-14 16:04,admin,admin,
4113,144210,6971,40686,7842,0,N,N,N,CP_Phys,TT_Task,DT_FixedDrtn,TK_NotStart,CZA-TK-0601-2280,"Lay-out, Cutting, and Fit-up",8398,1092,0,20,0,52.598377,52.598377,20,60,0,60,,,,2015-03-25 09:00,2015-03-28 09:00,,2014-11-18 07:00,2014-11-19 17:00,2014-11-18 07:00,2014-11-19 17:00,2014-11-18 07:00,2014-11-19 17:00,2015-03-25 09:00,2015-03-28 09:00,,PT_Normal,,,,,5DRSX7GZnkCdU83gltBwEw,sg9+pKYIv0aGFpBDNidHYQ,,,N,0,0,,,2014-04-13 07:21,2014-04-14 16:04,admin,admin,
4114,144211,6971,40686,7842,0,N,N,N,CP_Phys,TT_Task,DT_FixedDrtn,TK_NotStart,CZA-TK-0601-2290,Welding,8398,1092,0,50,0,65.747972,65.747972,50,150,0,150,,,,2015-03-28 09:00,2015-04-02 09:00,,2014-11-20 07:00,2014-11-25 17:00,2014-11-20 07:00,2014-11-25 17:00,2014-11-20 07:00,2014-11-25 17:00,2015-03-28 09:00,2015-04-02 09:00,,PT_Normal,,,,,DyJNuxXPY0emLaX4P5UhnA,xAabrKkJu0C9G9n+KudjkQ,,,N,0,0,,,2014-04-13 07:21,2014-04-14 16:04,admin,admin,
4115,144212,6971,40686,7842,0,N,N,N,CP_Phys,TT_Task,DT_FixedDrtn,TK_NotStart,CZA-TK-0601-2300,Inspection,8398,1092,0,70,0,13.149594,13.149594,70,0,0,0,,,,2015-03-25 09:00,2015-04-02 09:00,,2014-11-18 07:00,2014-11-25 17:00,2014-11-18 07:00,2014-11-25 17:00,2014-11-18 07:00,2014-11-25 17:00,2015-03-25 09:00,2015-04-02 09:00,,PT_Normal,,,,,rJ3dWV2v0k+hH+40ge92XQ,7rlReQqYK0K5OC1Gh1FVmw,,,N,0,0,,,2014-04-13 07:21,2014-04-14 16:04,admin,admin,
4116,144213,6971,40687,7842,0,N,N,N,CP_Phys,TT_Task,DT_FixedDrtn,TK_NotStart,CZA-TK-0601-2310,Erection and Fit-up,8398,1092,0,30,0,0,0,30,0,0,0,,,,2015-03-26 15:00,2015-03-30 15:00,,2014-11-19 13:00,2014-11-23 13:00,2014-11-19 13:00,2014-11-23 13:00,2014-11-19 13:00,2014-11-23 13:00,2015-03-26 15:00,2015-03-30 15:00,,PT_Normal,,,,,gtWof68WNUukAsMudIUlGg,8Rjv91Q7QU6J6bEu+WVfsQ,,,N,0,0,,,2014-04-13 07:21,2014-04-14 16:04,admin,admin,
4117,144214,6971,40687,7842,0,N,N,N,CP_Phys,TT_Task,DT_FixedDrtn,TK_NotStart,CZA-TK-0601-2320,Welding,8398,1092,0,70,0,0,0,70,210,0,210,,,,2015-03-30 15:00,2015-04-07 15:00,,2014-11-23 13:00,2014-12-01 13:00,2014-11-23 13:00,2014-12-01 13:00,2014-11-23 13:00,2014-12-01 13:00,2015-03-30 15:00,2015-04-07 15:00,,PT_Normal,,,,,nOlxKI5PCEaEnMJnRpbeAQ,Btc1MLPe9kaJjr1cc91Z2Q,,,N,0,0,,,2014-04-13 07:21,2014-04-14 16:04,admin,admin,
4118,144215,6971,40687,7842,0,N,N,N,CP_Phys,TT_Task,DT_FixedDrtn,TK_NotStart,CZA-TK-0601-2330,Inspection,8398,1092,0,100,0,0,0,100,0,0,0,,,,2015-03-26 15:00,2015-04-07 15:00,,2014-11-19 13:00,2014-12-01 13:00,2014-11-19 13:00,2014-12-01 13:00,2014-11-19 13:00,2014-12-01 13:00,2015-03-26 15:00,2015-04-07 15:00,,PT_Normal,,,,,mmYEpP0sNkC7w8yf26x93A,kb5MSYzf7UOZvzEG/9rFvg,,,N,0,0,,,2014-04-13 07:21,2014-04-14 16:04,admin,admin,
4119,144216,6971,40688,7842,0,N,N,N,CP_Phys,TT_Task,DT_FixedDrtn,TK_NotStart,CZA-TK-0601-2340,Installation of Primary and Secondary Seal,8398,1092,0,60,0,0,0,60,0,0,0,,,,2015-04-07 15:00,2015-04-14 15:00,,2014-12-01 13:00,2014-12-08 13:00,2014-12-01 13:00,2014-12-08 13:00,2014-12-01 13:00,2014-12-08 13:00,2015-04-07 15:00,2015-04-14 15:00,,PT_Normal,,,,,dpVDnRqDbU2HB4IPs7/XUw,kotpBJBbWUqm7yJct2McrQ,,,N,0,0,,,2014-04-13 07:21,2014-04-14 16:04,admin,admin,
4120,144217,6971,40688,7842,0,N,N,N,CP_Phys,TT_Task,DT_FixedDrtn,TK_NotStart,CZA-TK-0601-2350,Inspection,8398,1092,110,10,0,0,0,10,0,0,0,,,,2015-04-14 15:00,2015-04-15 15:00,,2014-12-08 13:00,2014-12-09 13:00,2014-12-08 13:00,2014-12-09 13:00,2014-12-08 13:00,2014-12-09 13:00,2015-04-14 15:00,2015-04-15 15:00,,PT_Normal,,,,,SSANIlMYWka3YW625mP+qQ,MvIRkCDu70G5mY9IubIp0g,,,N,0,0,,,2014-04-13 07:21,2014-04-14 16:04,admin,admin,
4121,144218,6971,39954,7842,0,N,N,N,CP_Phys,TT_Mile,DT_FixedDrtn,TK_NotStart,CZA-TK-0605-1650,Foundation Takeover From Client,,0,0,0,0,0,0,0,0,0,0,2014-03-20 11:00,,,2014-03-20 11:00,2014-03-20 11:00,,2014-03-20 11:00,2014-03-20 11:00,2014-03-20 11:00,2014-03-20 11:00,2014-03-20 11:00,2014-03-20 11:00,2014-03-20 11:00,2014-03-20 11:00,CS_MSO,PT_Normal,,,,,VYIqwE/Jukq51cw0YwYK+g,dF1x3BlgPUC43k/WQwrFqA,,,N,0,0,,,2014-04-13 07:21,2014-04-13 07:21,admin,admin,
4122,144219,6971,40128,7842,0,N,N,N,CP_Phys,TT_Task,DT_FixedDrtn,TK_NotStart,CZA-TK-0605-2680,"Filling, Holding and Draining of Water",8400,962,0,140,0,5850.859973,5850.859973,140,0,0,0,,,,2015-05-11 15:00,2015-05-27 15:00,,2015-01-19 13:00,2015-02-04 13:00,2015-01-19 13:00,2015-02-04 13:00,2015-01-19 13:00,2015-02-04 13:00,2015-05-11 15:00,2015-05-27 15:00,,PT_Normal,,,,,iiTBaPvMTkOcxy1li9XLtg,X0eON5+SiEKORu+ogJof1w,,,N,0,0,,,2014-04-13 07:21,2014-04-14 16:04,admin,admin,
4123,144220,6971,40117,7842,0,N,N,N,CP_Phys,TT_Task,DT_FixedDrtn,TK_NotStart,CZA-TK-0605-1480,Cutting of Annular Plates and Bottom Plates,8505,2922,0,50,0,968.1,968.1,50,0,0,0,,,,2015-01-20 09:00,2015-01-26 09:00,,2014-02-13 07:00,2014-02-18 17:00,2014-02-13 07:00,2014-02-18 17:00,2014-02-13 07:00,2014-02-18 17:00,2015-01-20 09:00,2015-01-26 09:00,,PT_Normal,,,,,gHilO88bQUytUtavFqZkxw,RcxZcO2GRE2RR35uSDL9Ww,,,N,0,0,,,2014-04-13 07:21,2014-04-15 07:43,admin,admin,
4124,144221,6971,40117,7842,0,N,N,N,CP_Phys,TT_Task,DT_FixedDrtn,TK_NotStart,CZA-TK-0605-1490,"Cutting,Bevelling & Rolling Shell No. 7",8505,3224,0,10,0,309.2358,309.2358,10,0,0,0,,,,2015-03-02 11:00,2015-03-03 11:00,,2014-02-19 07:00,2014-02-19 17:00,2014-02-19 07:00,2014-02-19 17:00,2014-02-19 07:00,2014-02-19 17:00,2015-03-02 11:00,2015-03-03 11:00,,PT_Normal,,,,,dD+Q6Fmj/EWgKeKDbFPSTw,lgGGi5bf90i0KuUDECZWug,,,N,0,0,,,2014-04-13 07:21,2014-04-15 07:43,admin,admin,
4125,144222,6971,40117,7842,0,N,N,N,CP_Phys,TT_Task,DT_FixedDrtn,TK_NotStart,CZA-TK-0605-1500,"Cutting , Beveling & Rolling Shell No.8",8505,3224,0,10,0,309.2358,309.2358,10,0,0,0,,,,2015-03-03 11:00,2015-03-04 11:00,,2014-02-20 07:00,2014-02-20 17:00,2014-02-20 07:00,2014-02-20 17:00,2014-02-20 07:00,2014-02-20 17:00,2015-03-03 11:00,2015-03-04 11:00,,PT_Normal,,,,,971vqopdiUSYPgTf4aALwA,Im6W5UCp1ky22L4IoWhhSw,,,N,0,0,,,2014-04-13 07:21,2014-04-15 07:43,admin,admin,
4126,144223,6971,40117,7842,0,N,N,N,CP_Phys,TT_Task,DT_FixedDrtn,TK_NotStart,CZA-TK-0605-1510,"Cutting, Fit-up and Weld of Stairway Platform, gratings Handrails (Upper Part)",8505,3224,0,50,0,0,0,50,0,0,0,,,,2015-03-04 11:00,2015-03-10 11:00,,2014-02-22 07:00,2014-02-26 17:00,2014-02-22 07:00,2014-02-26 17:00,2014-02-22 07:00,2014-02-26 17:00,2015-03-04 11:00,2015-03-10 11:00,,PT_Normal,,,,,f5KOYg3+n0yh2WCVb8bgPQ,SYxTcdjgnEKOcYuNQF4uuw,,,N,0,0,,,2014-04-13 07:21,2014-04-15 07:43,admin,admin,
4127,144224,6971,40117,7842,0,N,N,N,CP_Phys,TT_Task,DT_FixedDrtn,TK_NotStart,CZA-TK-0605-1520,Cutting of Floating Roof Plates,8505,3224,0,40,0,0,0,40,0,0,0,,,,2015-03-07 07:00,2015-03-10 17:00,,2014-02-23 13:00,2014-02-27 13:00,2014-02-23 13:00,2014-02-27 13:00,2014-02-23 13:00,2014-02-27 13:00,2015-03-07 07:00,2015-03-10 17:00,,PT_Normal,,,,,n8V4MDLsxE6M/tLvRMhM6g,FK1sEAVhkUyOI6NUmiKrbg,,,N,0,0,,,2014-04-13 07:21,2014-04-15 07:43,admin,admin,
4128,144225,6971,40117,7842,0,N,N,N,CP_Phys,TT_Task,DT_FixedDrtn,TK_NotStart,CZA-TK-0605-1530,"Cutting, Fit-up and Welding  of Pontoon",8505,3224,0,70,0,920.343,920.343,70,0,0,0,,,,2015-03-08 13:00,2015-03-16 13:00,,2014-02-25 09:00,2014-03-05 09:00,2014-02-25 09:00,2014-03-05 09:00,2014-02-25 09:00,2014-03-05 09:00,2015-03-08 13:00,2015-03-16 13:00,,PT_Normal,,,,,6BMGBYikkUOri1A/P9iPuA,Sywtfl25Zk+gc8EODEoljQ,,,N,0,0,,,2014-04-13 07:21,2014-04-15 07:43,admin,admin,
4129,144226,6971,40117,7842,0,N,N,N,CP_Phys,TT_Task,DT_FixedDrtn,TK_NotStart,CZA-TK-0605-1540,Cutting of Floating Roof Legs and Manholes,8505,3224,0,100,0,0,0,100,0,0,0,,,,2015-03-08 13:00,2015-03-19 13:00,,2014-02-25 09:00,2014-03-09 09:00,2014-02-25 09:00,2014-03-09 09:00,2014-02-25 09:00,2014-03-09 09:00,2015-03-08 13:00,2015-03-19 13:00,,PT_Normal,,,,,bVsQbDCkykOH7bercOvgFA,t1qqghOE1EOFFuouDRHgxQ,,,N,0,0,,,2014-04-13 07:21,2014-04-15 07:43,admin,admin,
4130,144227,6971,40117,7842,0,N,N,N,CP_Phys,TT_Task,DT_FixedDrtn,TK_NotStart,CZA-TK-0605-1550,"Cutting, Fit-up and Welding of Roof Structure",8505,3224,0,50,0,848.457,848.457,50,0,0,0,,,,2015-03-19 13:00,2015-03-25 13:00,,2014-03-09 09:00,2014-03-15 09:00,2014-03-09 09:00,2014-03-15 09:00,2014-03-09 09:00,2014-03-15 09:00,2015-03-19 13:00,2015-03-25 13:00,,PT_Normal,,,,,Of73wvPLukKGEa5x5YLYVg,A91yQ3K/806TUDta+ZuQYg,,,N,0,0,,,2014-04-13 07:21,2014-04-15 07:43,admin,admin,
4131,144228,6971,40117,7842,0,N,N,N,CP_Phys,TT_Task,DT_FixedDrtn,TK_NotStart,CZA-TK-0605-1560,Cutting of  Compression Ring,8505,3224,0,20,0,0,0,20,0,0,0,,,,2015-03-25 13:00,2015-03-28 13:00,,2014-03-15 09:00,2014-03-17 09:00,2014-03-15 09:00,2014-03-17 09:00,2014-03-15 09:00,2014-03-17 09:00,2015-03-25 13:00,2015-03-28 13:00,,PT_Normal,,,,,3lgbhYTTOE+KhDuGyhMYBg,VQwiKrA8XkKBBAVaohzcZg,,,N,0,0,,,2014-04-13 07:21,2014-04-15 07:43,admin,admin,
4132,144229,6971,40117,7842,0,N,N,N,CP_Phys,TT_Task,DT_FixedDrtn,TK_NotStart,CZA-TK-0605-1570,Cutting of Roof Plates,8505,3224,0,10,0,1311.069,1311.069,10,0,0,0,,,,2015-03-28 13:00,2015-03-29 13:00,,2014-03-17 09:00,2014-03-18 09:00,2014-03-17 09:00,2014-03-18 09:00,2014-03-17 09:00,2014-03-18 09:00,2015-03-28 13:00,2015-03-29 13:00,,PT_Normal,,,,,CVjyvyMjDkSRpR9NVzWJFQ,GcqanZAtFEOd4YgxiZbpsw,,,N,0,0,,,2014-04-13 07:21,2014-04-15 07:43,admin,admin,
4133,144230,6971,40117,7842,0,N,N,N,CP_Phys,TT_Task,DT_FixedDrtn,TK_NotStart,CZA-TK-0605-1580,"Cutting, Fit-up & Welding Roof Platform, Gratings and Handrails",8505,3224,0,70,0,0,0,70,0,0,0,,,,2015-03-29 13:00,2015-04-06 13:00,,2014-03-18 09:00,2014-03-26 09:00,2014-03-18 09:00,2014-03-26 09:00,2014-03-18 09:00,2014-03-26 09:00,2015-03-29 13:00,2015-04-06 13:00,,PT_Normal,,,,,YY8BnqR6jk2pPZ1JJORYiw,zR2h1XNgik+pvl5tsArUGA,,,N,0,0,,,2014-04-13 07:21,2014-04-15 07:43,admin,admin,
4134,144231,6971,40117,7842,0,N,N,N,CP_Phys,TT_Task,DT_FixedDrtn,TK_NotStart,CZA-TK-0605-1590,"Cutting, Fit-up and Welding of Roof Nozzles, Manholes and Other Appurtanances",8505,3224,0,70,0,0,0,70,0,0,0,,,,2015-03-31 09:00,2015-04-08 09:00,,2014-03-19 15:00,2014-03-27 15:00,2014-03-19 15:00,2014-03-27 15:00,2014-03-19 15:00,2014-03-27 15:00,2015-03-31 09:00,2015-04-08 09:00,,PT_Normal,,,,,t2Wrd7fzU06Yw1XxpVJojg,oe/eYbUDAUeL/R5ASnuIxA,,,N,0,0,,,2014-04-13 07:21,2014-04-15 07:43,admin,admin,
4135,144232,6971,40117,7842,0,N,N,N,CP_Phys,TT_Task,DT_FixedDrtn,TK_NotStart,CZA-TK-0605-1600,"Cutting , Beveling & Rolling Shell No.6",8505,3224,0,10,0,360.7887,360.7887,10,0,0,0,,,,2015-04-08 09:00,2015-04-09 09:00,,2014-03-27 15:00,2014-03-29 15:00,2014-03-27 15:00,2014-03-29 15:00,2014-03-27 15:00,2014-03-29 15:00,2015-04-08 09:00,2015-04-09 09:00,,PT_Normal,,,,,JmXz3anYr0eZ/KXwP0iLXA,kY6ddoh7UESws5cJCBB8Ww,,,N,0,0,,,2014-04-13 07:21,2014-04-15 07:43,admin,admin,
4136,144233,6971,40117,7842,0,N,N,N,CP_Phys,TT_Task,DT_FixedDrtn,TK_NotStart,CZA-TK-0605-1610,"Cutting , Beveling & Rolling Shell No.5",8505,3224,0,10,0,463.902,463.902,10,0,0,0,,,,2015-04-08 09:00,2015-04-09 09:00,,2014-03-27 15:00,2014-03-29 15:00,2014-03-27 15:00,2014-03-29 15:00,2014-03-27 15:00,2014-03-29 15:00,2015-04-08 09:00,2015-04-09 09:00,,PT_Normal,,,,,kJnMxkxBP06MENM3jG/cIw,EcWJqZDhgEWPBb3zwELI8Q,,,N,0,0,,,2014-04-13 07:21,2014-04-15 07:43,admin,admin,
4137,144234,6971,40117,7842,0,N,N,N,CP_Phys,TT_Task,DT_FixedDrtn,TK_NotStart,CZA-TK-0605-1620,"Cutting , Beveling & Rolling Shell No.4",8505,3224,0,10,0,567.0336,567.0336,10,0,0,0,,,,2015-04-09 09:00,2015-04-11 09:00,,2014-03-29 15:00,2014-03-30 15:00,2014-03-29 15:00,2014-03-30 15:00,2014-03-29 15:00,2014-03-30 15:00,2015-04-09 09:00,2015-04-11 09:00,,PT_Normal,,,,,101cqee3wESx52DzRyNm6Q,QcfekRtl/U+H0RbJpUWb5A,,,N,0,0,,,2014-04-13 07:21,2014-04-15 07:43,admin,admin,
4138,144235,6971,40117,7842,0,N,N,N,CP_Phys,TT_Task,DT_FixedDrtn,TK_NotStart,CZA-TK-0605-1630,"Cutting , Beveling & Rolling Shell No.3",8505,3224,0,10,0,670.1742,670.1742,10,0,0,0,,,,2015-04-11 15:00,2015-04-12 15:00,,2014-03-31 11:00,2014-04-01 11:00,2014-03-31 11:00,2014-04-01 11:00,2014-03-31 11:00,2014-04-01 11:00,2015-04-11 15:00,2015-04-12 15:00,,PT_Normal,,,,,tqUCMwCn4kO7ko9baxowdA,0ni4Nepg/EmWySsUEnHTZA,,,N,0,0,,,2014-04-13 07:21,2014-04-15 07:43,admin,admin,
4139,144236,6971,40117,7842,0,N,N,N,CP_Phys,TT_Task,DT_FixedDrtn,TK_NotStart,CZA-TK-0605-1640,"Cutting , Beveling & Rolling Shell No.2",8505,3224,0,10,0,1028.232,1028.232,10,0,0,0,,,,2015-04-11 15:00,2015-04-12 15:00,,2014-03-31 11:00,2014-04-01 11:00,2014-03-31 11:00,2014-04-01 11:00,2014-03-31 11:00,2014-04-01 11:00,2015-04-11 15:00,2015-04-12 15:00,,PT_Normal,,,,,04OC2a0jWky/Q5SdRRyfdg,HSaIk1uXI0WfEop/YXVjlw,,,N,0,0,,,2014-04-13 07:21,2014-04-15 07:43,admin,admin,
4140,144237,6971,40117,7842,0,N,N,N,CP_Phys,TT_Task,DT_FixedDrtn,TK_NotStart,CZA-TK-0605-1900,"Cutting , Beveling & Rolling Shell No.1",8505,3224,0,10,0,0,0,10,0,0,0,,,,2015-04-12 15:00,2015-04-13 15:00,,2014-04-01 11:00,2014-04-02 11:00,2014-04-01 11:00,2014-04-02 11:00,2014-04-01 11:00,2014-04-02 11:00,2015-04-12 15:00,2015-04-13 15:00,,PT_Normal,,,,,dg+ktp/aX0mo6im0m4tsnQ,,,,N,0,0,,,2014-04-13 07:21,2014-04-15 07:43,admin,admin,
4141,144238,6971,40117,7842,0,N,N,N,CP_Phys,TT_Task,DT_FixedDrtn,TK_NotStart,CZA-TK-0605-1910,"Cutting, Fit-up and Welding of Roof Nozzles, Manholes and Other Appurtanances",8505,3224,0,70,0,0,0,70,0,0,0,,,,2015-04-13 15:00,2015-04-21 15:00,,2014-04-02 11:00,2014-04-10 11:00,2014-04-02 11:00,2014-04-10 11:00,2014-04-02 11:00,2014-04-10 11:00,2015-04-13 15:00,2015-04-21 15:00,,PT_Normal,,,,,P+oapkLtZ0KXiunrS0TxFQ,,,,N,0,0,,,2014-04-13 07:21,2014-04-15 07:43,admin,admin,
4142,144239,6971,40117,7842,0,N,N,N,CP_Phys,TT_Task,DT_FixedDrtn,TK_NotStart,CZA-TK-0605-1920,"Cutting, Fit-up and Weld of Stairway Platform, gratings Handrails (Upper Part)",8505,3224,1147.333333,50,0,0,0,50,0,0,0,,,,2015-04-13 15:00,2015-04-19 15:00,,2014-04-02 11:00,2014-04-08 11:00,2014-04-02 11:00,2014-04-08 11:00,2014-04-02 11:00,2014-04-08 11:00,2015-04-13 15:00,2015-04-19 15:00,,PT_Normal,,,,,XBE6/ysou0my69grYvTgGQ,,,,N,0,0,,,2014-04-13 07:21,2014-04-15 07:43,admin,admin,
4143,144240,6971,40075,7842,0,N,N,N,CP_Phys,TT_Task,DT_FixedDrtn,TK_NotStart,CZA-TK-0605-2690,"Blasting and Painting Inside, Outside and Bottom Plates",8400,962,0,200,0,3510.515984,3510.515984,200,0,0,0,,,,2015-05-27 15:00,2015-06-20 15:00,,2015-02-04 13:00,2015-02-28 13:00,2015-02-04 13:00,2015-02-28 13:00,2015-02-04 13:00,2015-02-28 13:00,2015-05-27 15:00,2015-06-20 15:00,,PT_Normal,,,,,+Kc1k65gp0iKBRQ2AjFHww,6dW0vFcXc0aXFxpNnoYvyQ,,,N,0,0,,,2014-04-13 07:21,2014-04-14 16:04,admin,admin,
4144,144241,6971,40695,7842,0,N,N,N,CP_Phys,TT_Task,DT_FixedDrtn,TK_NotStart,CZA-TK-0605-2380,"Jacking,Erection and Fit-up",8400,2076.666667,0,11.333333,0,248.233011,248.233011,11.333333,0,0,0,,,,2015-03-15 16:30,2015-03-17 07:50,,2014-07-16 09:50,2014-07-17 11:10,2014-07-16 09:50,2014-07-17 11:10,2014-07-16 09:50,2014-07-17 11:10,2015-03-15 16:30,2015-03-17 07:50,,PT_Normal,,,,,bz72th5W6UemM40P8LfONg,CEdBXTMM4UaucEDQRiiK3A,,,N,0,0,,,2014-04-13 07:21,2014-04-15 07:43,admin,admin,
4145,144242,6971,40695,7842,0,N,N,N,CP_Phys,TT_Task,DT_FixedDrtn,TK_NotStart,CZA-TK-0605-2390,Welding,8400,2076.666667,0,50,0,310.291264,310.291264,50,200,0,200,,,,2015-03-17 07:50,2015-03-23 07:50,,2014-07-17 11:10,2014-07-23 11:10,2014-07-17 11:10,2014-07-23 11:10,2014-07-17 11:10,2014-07-23 11:10,2015-03-17 07:50,2015-03-23 07:50,,PT_Normal,,,,,TtsRhVR7C0q2NdXfQySaZQ,5Riq1oFX1kWPRDEXWNxfJg,,,N,0,0,,,2014-04-13 07:21,2014-04-15 07:43,admin,admin,
4146,144243,6971,40695,7842,0,N,N,N,CP_Phys,TT_Task,DT_FixedDrtn,TK_NotStart,CZA-TK-0605-2400,Inspection,8400,2076.666667,0,60,0,62.058253,62.058253,60,0,0,0,,,,2015-03-16 07:50,2015-03-23 07:50,,2014-07-16 11:10,2014-07-23 11:10,2014-07-16 11:10,2014-07-23 11:10,2014-07-16 11:10,2014-07-23 11:10,2015-03-16 07:50,2015-03-23 07:50,,PT_Normal,,,,,sw/cdsw61k+j18wb42a/rA,6KISZR25ekCMHSgx0gK2nA,,,N,0,0,,,2014-04-13 07:21,2014-04-15 07:43,admin,admin,
4147,144244,6971,40696,7842,0,N,N,N,CP_Phys,TT_Task,DT_FixedDrtn,TK_NotStart,CZA-TK-0605-2410,"Jacking, Erection and Fit-up",8400,2076.666667,0,11.166667,0,293.385365,293.385365,11.166667,0,0,0,,,,2015-03-23 07:50,2015-03-24 09:00,,2014-07-23 11:10,2014-07-24 12:20,2014-07-23 11:10,2014-07-24 12:20,2014-07-23 11:10,2014-07-24 12:20,2015-03-23 07:50,2015-03-24 09:00,,PT_Normal,,,,,t3Az0awYzEOl4B7Afoz1TA,fCXbAxxmvUGiQ01sUt3dpA,,,N,0,0,,,2014-04-13 07:21,2014-04-15 07:43,admin,admin,
4148,144245,6971,40696,7842,0,N,N,N,CP_Phys,TT_Task,DT_FixedDrtn,TK_NotStart,CZA-TK-0605-2420,Welding,8400,2076.666667,0,50,0,366.731706,366.731706,50,200,0,200,,,,2015-03-24 09:00,2015-03-30 09:00,,2014-07-24 12:20,2014-07-30 12:20,2014-07-24 12:20,2014-07-30 12:20,2014-07-24 12:20,2014-07-30 12:20,2015-03-24 09:00,2015-03-30 09:00,,PT_Normal,,,,,67l78IHjCUOoHr6HDNEn0A,iZ/ZtjXd8EKYmA6MrnIxDA,,,N,0,0,,,2014-04-13 07:21,2014-04-15 07:43,admin,admin,
4149,144246,6971,40696,7842,0,N,N,N,CP_Phys,TT_Task,DT_FixedDrtn,TK_NotStart,CZA-TK-0605-2430,Inspection,8400,2076.666667,0,60,0,73.346341,73.346341,60,0,0,0,,,,2015-03-23 09:00,2015-03-30 09:00,,2014-07-23 12:20,2014-07-30 12:20,2014-07-23 12:20,2014-07-30 12:20,2014-07-23 12:20,2014-07-30 12:20,2015-03-23 09:00,2015-03-30 09:00,,PT_Normal,,,,,ZOAg3uuKnUuqoxzbzDLZ/A,HWzdzrB1bUOklJQzNYmTyg,,,N,0,0,,,2014-04-13 07:21,2014-04-15 07:43,admin,admin,
4150,144247,6971,40697,7842,0,N,N,N,CP_Phys,TT_Task,DT_FixedDrtn,TK_NotStart,CZA-TK-0605-2440,"Jacking, Erection and Fit-up",8400,2076.666667,0,10,0,450.134041,450.134041,10,40,0,40,,,,2015-03-30 09:00,2015-03-31 09:00,,2014-07-30 12:20,2014-07-31 12:20,2014-07-30 12:20,2014-07-31 12:20,2014-07-30 12:20,2014-07-31 12:20,2015-03-30 09:00,2015-03-31 09:00,,PT_Normal,,,,,ooJxk7CgXkyZiNrTbTYgsg,1pXe6gvzU0i5lAYKpLeD0w,,,N,0,0,,,2014-04-13 07:21,2014-04-15 07:43,admin,admin,
4151,144248,6971,40697,7842,0,N,N,N,CP_Phys,TT_Task,DT_FixedDrtn,TK_NotStart,CZA-TK-0605-2450,Welding,8400,2076.666667,0,50,0,562.667551,562.667551,50,200,0,200,,,,2015-03-31 09:00,2015-04-06 09:00,,2014-07-31 12:20,2014-08-06 12:20,2014-07-31 12:20,2014-08-06 12:20,2014-07-31 12:20,2014-08-06 12:20,2015-03-31 09:00,2015-04-06 09:00,,PT_Normal,,,,,KWVew2HIrEiONSAlFSZVuw,7Yo4SoVkv063PiKaliYYUg,,,N,0,0,,,2014-04-13 07:21,2014-04-15 07:43,admin,admin,
4152,144249,6971,40697,7842,0,N,N,N,CP_Phys,TT_Task,DT_FixedDrtn,TK_NotStart,CZA-TK-0605-2560,Inspection,8400,2076.666667,0,60,0,112.53351,112.53351,60,0,0,0,,,,2015-03-30 09:00,2015-04-06 09:00,,2014-07-30 12:20,2014-08-06 12:20,2014-07-30 12:20,2014-08-06 12:20,2014-07-30 12:20,2014-08-06 12:20,2015-03-30 09:00,2015-04-06 09:00,,PT_Normal,,,,,mDQjaaqzTEGkrHY/OdZBcg,y7m04reAH0ekDG2VRosC2w,,,N,0,0,,,2014-04-13 07:21,2014-04-15 07:43,admin,admin,
4153,144250,6971,40698,7842,0,N,N,N,CP_Phys,TT_Task,DT_FixedDrtn,TK_NotStart,CZA-TK-0605-2570,"Jacking, Erection and Fit-up",8400,2076.666667,0,10,0,0,0,10,40,0,40,,,,2015-04-06 09:00,2015-04-07 09:00,,2014-08-06 12:20,2014-08-07 12:20,2014-08-06 12:20,2014-08-07 12:20,2014-08-06 12:20,2014-08-07 12:20,2015-04-06 09:00,2015-04-07 09:00,,PT_Normal,,,,,VKhayU7qvEehG0LVbGfq1g,bF2aVQhj8ESjAFYrEPRpYQ,,,N,0,0,,,2014-04-13 07:21,2014-04-15 07:43,admin,admin,
4154,144251,6971,40698,7842,0,N,N,N,CP_Phys,TT_Task,DT_FixedDrtn,TK_NotStart,CZA-TK-0605-2580,Welding,8400,2076.666667,0,50,0,0,0,50,200,0,200,,,,2015-04-07 09:00,2015-04-13 09:00,,2014-08-07 12:20,2014-08-13 12:20,2014-08-07 12:20,2014-08-13 12:20,2014-08-07 12:20,2014-08-13 12:20,2015-04-07 09:00,2015-04-13 09:00,,PT_Normal,,,,,rzCDOP+jdE+0T7FbVnmCrg,JaZnFipIh0Kqh1ugwrdWOA,,,N,0,0,,,2014-04-13 07:21,2014-04-15 07:43,admin,admin,
4155,144252,6971,40698,7842,0,N,N,N,CP_Phys,TT_Task,DT_FixedDrtn,TK_NotStart,CZA-TK-0605-2590,Inspection,8400,2076.666667,0,60,0,0,0,60,0,0,0,,,,2015-04-06 09:00,2015-04-13 09:00,,2014-08-06 12:20,2014-08-13 12:20,2014-08-06 12:20,2014-08-13 12:20,2014-08-06 12:20,2014-08-13 12:20,2015-04-06 09:00,2015-04-13 09:00,,PT_Normal,,,,,bCwTUqFPEEOZBkJl1MVnrg,VlkJrZ25yE6d70sz5kOJ7w,,,N,0,0,,,2014-04-13 07:21,2014-04-15 07:43,admin,admin,
4156,144253,6971,40699,7842,0,N,N,N,CP_Phys,TT_Task,DT_FixedDrtn,TK_NotStart,CZA-TK-0605-2600,"Lay-out, Cutting, and Fit-up",8400,2076.666667,0,30,0,0,0,30,120,0,120,,,,2015-04-13 09:00,2015-04-16 09:00,,2014-08-13 12:20,2014-08-17 12:20,2014-08-13 12:20,2014-08-17 12:20,2014-08-13 12:20,2014-08-17 12:20,2015-04-13 09:00,2015-04-16 09:00,,PT_Normal,,,,,Cb5BpXKvNECEvmbTmGa9Vw,0H5f8xOvBkm8/2pHAZfFZA,,,N,0,0,,,2014-04-13 07:21,2014-04-15 07:43,admin,admin,
4157,144254,6971,40699,7842,0,N,N,N,CP_Phys,TT_Task,DT_FixedDrtn,TK_NotStart,CZA-TK-0605-2610,Welding,8400,2076.666667,0,50,0,0,0,50,200,0,200,,,,2015-04-16 09:00,2015-04-22 09:00,,2014-08-17 12:20,2014-08-23 12:20,2014-08-17 12:20,2014-08-23 12:20,2014-08-17 12:20,2014-08-23 12:20,2015-04-16 09:00,2015-04-22 09:00,,PT_Normal,,,,,QAHvYL6f2kKoeIvHWP0Wzw,rVWJ17Pblk2gwbtG1dVzng,,,N,0,0,,,2014-04-13 07:21,2014-04-15 07:43,admin,admin,
4158,144255,6971,40699,7842,0,N,N,N,CP_Phys,TT_Task,DT_FixedDrtn,TK_NotStart,CZA-TK-0605-2620,Inspection,8400,2076.666667,0,80,0,0,0,80,0,0,0,,,,2015-04-13 09:00,2015-04-22 09:00,,2014-08-13 12:20,2014-08-23 12:20,2014-08-13 12:20,2014-08-23 12:20,2014-08-13 12:20,2014-08-23 12:20,2015-04-13 09:00,2015-04-22 09:00,,PT_Normal,,,,,3LzH1bi+ykqLx6Q/lN1YHw,sQsnFRCQHEOAsoS6eM14kg,,,N,0,0,,,2014-04-13 07:21,2014-04-15 07:43,admin,admin,
4159,144256,6971,40700,7842,0,N,N,N,CP_Phys,TT_Task,DT_FixedDrtn,TK_NotStart,CZA-TK-0605-2630,Erection and Fit-up,8400,2076.666667,0,40,0,0,0,40,160,0,160,,,,2015-04-19 15:00,2015-04-23 15:00,,2014-08-20 08:20,2014-08-25 08:20,2014-08-20 08:20,2014-08-25 08:20,2014-08-20 08:20,2014-08-25 08:20,2015-04-19 15:00,2015-04-23 15:00,,PT_Normal,,,,,pXYGtFkWRk2HrWvpPvMi7g,I8rVN6vi3kGm/6N92/6RQw,,,N,0,0,,,2014-04-13 07:21,2014-04-15 07:43,admin,admin,
4160,144257,6971,40700,7842,0,N,N,N,CP_Phys,TT_Task,DT_FixedDrtn,TK_NotStart,CZA-TK-0605-2640,Welding,8400,2076.666667,0,100,0,0,0,100,400,0,400,,,,2015-04-23 15:00,2015-05-05 15:00,,2014-08-25 08:20,2014-09-06 08:20,2014-08-25 08:20,2014-09-06 08:20,2014-08-25 08:20,2014-09-06 08:20,2015-04-23 15:00,2015-05-05 15:00,,PT_Normal,,,,,hqx1rnRCWUGWnR9/x60p9g,AXx7AZSCCkKFue+yWaVRjA,,,N,0,0,,,2014-04-13 07:21,2014-04-15 07:43,admin,admin,
4161,144258,6971,40700,7842,0,N,N,N,CP_Phys,TT_Task,DT_FixedDrtn,TK_NotStart,CZA-TK-0605-2650,Inspection,8400,2076.666667,0,140,0,0,0,140,0,0,0,,,,2015-04-19 15:00,2015-05-05 15:00,,2014-08-20 08:20,2014-09-06 08:20,2014-08-20 08:20,2014-09-06 08:20,2014-08-20 08:20,2014-09-06 08:20,2015-04-19 15:00,2015-05-05 15:00,,PT_Normal,,,,,s/T6pWsD3UyQLo14Q3ZM4Q,jDBwQJVSE0SN5dyLMdBGNg,,,N,0,0,,,2014-04-13 07:21,2014-04-15 07:43,admin,admin,
4162,144259,6971,40701,7842,0,N,N,N,CP_Phys,TT_Task,DT_FixedDrtn,TK_NotStart,CZA-TK-0605-2660,Installation of Primary and Secondary Seal,8400,2076.666667,0,40,0,0,0,40,0,0,0,,,,2015-05-05 15:00,2015-05-10 15:00,,2014-09-06 08:20,2014-09-10 08:20,2014-09-06 08:20,2014-09-10 08:20,2014-09-06 08:20,2014-09-10 08:20,2015-05-05 15:00,2015-05-10 15:00,,PT_Normal,,,,,4onMXFi3zUy94ydI0q1AuA,pR4jTPCaiEiQ7y97PB15mQ,,,N,0,0,,,2014-04-13 07:21,2014-04-15 07:43,admin,admin,
4163,144260,6971,40701,7842,0,N,N,N,CP_Phys,TT_Task,DT_FixedDrtn,TK_NotStart,CZA-TK-0605-2670,Inspection,8400,2076.666667,1114.666667,10,0,0,0,10,0,0,0,,,,2015-05-10 15:00,2015-05-11 15:00,,2014-09-10 08:20,2014-09-11 08:20,2014-09-10 08:20,2014-09-11 08:20,2014-09-10 08:20,2014-09-11 08:20,2015-05-10 15:00,2015-05-11 15:00,,PT_Normal,,,,,oCPxN2XanUCT7Nf8I2ZiPA,VpmlM+Ida0WZuylfbdjC7A,,,N,0,0,,,2014-04-13 07:21,2014-04-15 07:43,admin,admin,
4164,144261,6971,40702,7842,0,N,N,N,CP_Phys,TT_Task,DT_FixedDrtn,TK_NotStart,CZA-TK-0605-2020,Erection and Fit-up,8400,2076.666667,0,10,0,135.375635,135.375635,10,0,0,0,,,,2014-12-13 07:40,2014-12-14 07:40,,2014-04-14 11:00,2014-04-15 11:00,2014-04-14 11:00,2014-04-15 11:00,2014-04-14 11:00,2014-04-15 11:00,2014-12-13 07:40,2014-12-14 07:40,,PT_Normal,,,,,U0PyrcXzk0SJi+TJQRAfmg,3rIQEhxlekiCLbOkV1AQXg,,,N,0,0,,,2014-04-13 07:21,2014-04-15 07:43,admin,admin,
4165,144262,6971,40702,7842,0,N,N,N,CP_Phys,TT_Task,DT_FixedDrtn,TK_NotStart,CZA-TK-0605-2030,Welding,8400,2076.666667,0,50,0,169.219544,169.219544,50,200,0,200,,,,2014-12-14 07:40,2014-12-20 07:40,,2014-04-15 11:00,2014-04-21 11:00,2014-04-15 11:00,2014-04-21 11:00,2014-04-15 11:00,2014-04-21 11:00,2014-12-14 07:40,2014-12-20 07:40,,PT_Normal,,,,,RbKSXaUJxUeAe9QOj/pP1w,6SJl8/Kh8U2hgmRQNdr/lA,,,N,0,0,,,2014-04-13 07:21,2014-04-15 07:43,admin,admin,
4166,144263,6971,40702,7842,0,N,N,N,CP_Phys,TT_Task,DT_FixedDrtn,TK_NotStart,CZA-TK-0605-2040,Inspection,8400,2076.666667,0,60,0,33.843909,33.843909,60,0,0,0,,,,2014-12-13 07:40,2014-12-20 07:40,,2014-04-14 11:00,2014-04-21 11:00,2014-04-14 11:00,2014-04-21 11:00,2014-04-14 11:00,2014-04-21 11:00,2014-12-13 07:40,2014-12-20 07:40,,PT_Normal,,,,,SwRuaiEt/0auhoLswoa50w,jfsTZH23f0ehksIpa62usg,,,N,0,0,,,2014-04-13 07:21,2014-04-15 07:43,admin,admin,
4167,144264,6971,40703,7842,0,N,N,N,CP_Phys,TT_Task,DT_FixedDrtn,TK_NotStart,CZA-TK-0605-2050,"Cutting, Installation and Fit-up",8400,2076.666667,0,20,0,0,0,20,80,0,80,,,,2014-12-20 07:40,2014-12-22 07:40,,2014-04-21 11:00,2014-04-23 11:00,2014-04-21 11:00,2014-04-23 11:00,2014-04-21 11:00,2014-04-23 11:00,2014-12-20 07:40,2014-12-22 07:40,,PT_Normal,,,,,4716Vo7CJUCvts+IUDf7gg,+e825ARaKU+UuzHuqqZl/g,,,N,0,0,,,2014-04-13 07:21,2014-04-15 07:43,admin,admin,
4168,144265,6971,40703,7842,0,N,N,N,CP_Phys,TT_Task,DT_FixedDrtn,TK_NotStart,CZA-TK-0605-2060,Welding,8400,2076.666667,0,50,0,0,0,50,200,0,200,,,,2014-12-22 07:40,2014-12-28 07:40,,2014-04-23 11:00,2014-04-29 11:00,2014-04-23 11:00,2014-04-29 11:00,2014-04-23 11:00,2014-04-29 11:00,2014-12-22 07:40,2014-12-28 07:40,,PT_Normal,,,,,oXD74fztaEiwBxutlQvw9Q,Uxpe1xvG6kmxZ3WA2rNdOA,,,N,0,0,,,2014-04-13 07:21,2014-04-15 07:43,admin,admin,
4169,144266,6971,40703,7842,0,N,N,N,CP_Phys,TT_Task,DT_FixedDrtn,TK_NotStart,CZA-TK-0605-2070,Inspection,8400,2076.666667,0,70,0,0,0,70,0,0,0,,,,2014-12-20 07:40,2014-12-28 07:40,,2014-04-21 11:00,2014-04-29 11:00,2014-04-21 11:00,2014-04-29 11:00,2014-04-21 11:00,2014-04-29 11:00,2014-12-20 07:40,2014-12-28 07:40,,PT_Normal,,,,,83P0d5/kOUyCHMayuieteQ,3bQGBtEAnUK1RIrGQknDrw,,,N,0,0,,,2014-04-13 07:21,2014-04-15 07:43,admin,admin,
4170,144267,6971,40704,7842,0,N,N,N,CP_Phys,TT_Task,DT_FixedDrtn,TK_NotStart,CZA-TK-0605-2080,Erection and Fit-up,8400,2076.666667,0,18.666667,0,0,0,18.666667,0,0,0,,,,2014-12-20 07:40,2014-12-21 16:20,,2014-04-21 11:00,2014-04-23 09:40,2014-04-21 11:00,2014-04-23 09:40,2014-04-21 11:00,2014-04-23 09:40,2014-12-20 07:40,2014-12-21 16:20,,PT_Normal,,,,,7rLb7XALzkKZ4RCf8XtpVw,3GcoQCe6t0e2tQmxS8iOTA,,,N,0,0,,,2014-04-13 07:21,2014-04-15 07:43,admin,admin,
4171,144268,6971,40704,7842,0,N,N,N,CP_Phys,TT_Task,DT_FixedDrtn,TK_NotStart,CZA-TK-0605-2090,Welding,8400,2076.833333,0.166667,28.666667,0,0,0,28.666667,0,0,0,,,,2014-12-21 16:30,2014-12-24 15:10,,2014-04-23 09:40,2014-04-27 08:20,2014-04-23 09:40,2014-04-27 08:20,2014-04-23 09:40,2014-04-27 08:20,2014-12-21 16:30,2014-12-24 15:10,,PT_Normal,,,,,4Rs9+1cOrU20Pm/6swLYvQ,ZIPr/b4nzUCrpciL5iitGQ,,,N,0,0,,,2014-04-13 07:21,2014-04-15 07:43,admin,admin,
4172,144269,6971,40704,7842,0,N,N,N,CP_Phys,TT_Task,DT_FixedDrtn,TK_NotStart,CZA-TK-0605-2100,Inspection,8400,2076.666667,0,47.5,0,0,0,47.5,0,0,0,,,,2014-12-20 07:40,2014-12-24 15:10,,2014-04-21 11:00,2014-04-27 08:30,2014-04-21 11:00,2014-04-27 08:30,2014-04-21 11:00,2014-04-27 08:30,2014-12-20 07:40,2014-12-24 15:10,,PT_Normal,,,,,vCLM87LZcE2a9rHnJaHo5w,DUAr4dsO5kKeGyFballe6Q,,,N,0,0,,,2014-04-13 07:21,2014-04-15 07:43,admin,admin,
4173,144270,6971,40705,7842,0,N,N,N,CP_Phys,TT_Task,DT_FixedDrtn,TK_NotStart,CZA-TK-0605-2110,Laying and Fit-up,8400,2076.666667,0,20,0,0,0,20,80,0,80,,,,2014-12-24 15:10,2014-12-27 15:10,,2014-04-27 08:30,2014-04-29 08:30,2014-04-27 08:30,2014-04-29 08:30,2014-04-27 08:30,2014-04-29 08:30,2014-12-24 15:10,2014-12-27 15:10,,PT_Normal,,,,,/zS2oEEn4kyAZ91DXm+G1Q,UlwvNwr1iESh1gVQo6Pvrw,,,N,0,0,,,2014-04-13 07:21,2014-04-15 07:43,admin,admin,
4174,144271,6971,40705,7842,0,N,N,N,CP_Phys,TT_Task,DT_FixedDrtn,TK_NotStart,CZA-TK-0605-2120,Welding,8400,2076.666667,0,80,0,0,0,80,320,0,320,,,,2014-12-27 15:10,2015-01-05 15:10,,2014-04-29 08:30,2014-05-08 08:30,2014-04-29 08:30,2014-05-08 08:30,2014-04-29 08:30,2014-05-08 08:30,2014-12-27 15:10,2015-01-05 15:10,,PT_Normal,,,,,0Qj1faZLykyU6B8jUrDbqg,cpLKoxO8V0Ko1cwM5OV6EA,,,N,0,0,,,2014-04-13 07:21,2014-04-15 07:43,admin,admin,
4175,144272,6971,40705,7842,0,N,N,N,CP_Phys,TT_Task,DT_FixedDrtn,TK_NotStart,CZA-TK-0605-2130,Inspection,8400,2076.666667,0,100,0,0,0,100,0,0,0,,,,2014-12-24 15:10,2015-01-05 15:10,,2014-04-27 08:30,2014-05-08 08:30,2014-04-27 08:30,2014-05-08 08:30,2014-04-27 08:30,2014-05-08 08:30,2014-12-24 15:10,2015-01-05 15:10,,PT_Normal,,,,,gSlVVnt7+0a5/RDgc3bpnA,s35PYhcJREKrHBeSblEE9g,,,N,0,0,,,2014-04-13 07:21,2014-04-15 07:43,admin,admin,
4176,144273,6971,40706,7842,0,N,N,N,CP_Phys,TT_Task,DT_FixedDrtn,TK_NotStart,CZA-TK-0605-2140,"Laying, Cutting all Holes and Fit-up",8400,2076.666667,0,40,0,402.902957,402.902957,40,120,0,120,,,,2015-01-05 15:10,2015-01-10 15:10,,2014-05-08 08:30,2014-05-13 08:30,2014-05-08 08:30,2014-05-13 08:30,2014-05-08 08:30,2014-05-13 08:30,2015-01-05 15:10,2015-01-10 15:10,,PT_Normal,,,,,SVZPf93zh0mV0FFK51tNEA,uuY73ZQtnUaS5QoSPACN3Q,,,N,0,0,,,2014-04-13 07:21,2014-04-15 07:43,admin,admin,
4177,144274,6971,40706,7842,0,N,N,N,CP_Phys,TT_Task,DT_FixedDrtn,TK_NotStart,CZA-TK-0605-2150,Welding,8400,2116.666667,40,100,0,503.628696,503.628696,100,400,0,400,,,,2015-01-10 15:10,2015-01-21 15:10,,2014-05-08 08:30,2014-05-20 08:30,2014-05-08 08:30,2014-05-20 08:30,2014-05-08 08:30,2014-05-20 08:30,2015-01-10 15:10,2015-01-21 15:10,,PT_Normal,,,,,l9U0s2SWbkCYQzQbjKNuwA,2cw1zadqqkK1H9DZqy8Dfw,,,N,0,0,,,2014-04-13 07:21,2014-04-15 07:43,admin,admin,
4178,144275,6971,40706,7842,0,N,N,N,CP_Phys,TT_Task,DT_FixedDrtn,TK_NotStart,CZA-TK-0605-2160,Inspection,8400,2076.666667,0,140,0,100.725739,100.725739,140,0,0,0,,,,2015-01-05 15:10,2015-01-21 15:10,,2014-05-08 08:30,2014-05-25 08:30,2014-05-08 08:30,2014-05-25 08:30,2014-05-08 08:30,2014-05-25 08:30,2015-01-05 15:10,2015-01-21 15:10,,PT_Normal,,,,,u/E06dmtGkCRoBTuqd5n5w,VGBoocETdU2dXrMLgFX04g,,,N,0,0,,,2014-04-13 07:21,2014-04-15 07:43,admin,admin,
4179,144276,6971,40707,7842,0,N,N,N,CP_Phys,TT_Task,DT_FixedDrtn,TK_NotStart,CZA-TK-0605-2170,Erection and Fit-up,8400,2076.666667,0,20,0,371.433079,371.433079,20,80,0,80,,,,2015-01-21 15:10,2015-01-24 15:10,,2014-05-25 08:30,2014-05-27 08:30,2014-05-25 08:30,2014-05-27 08:30,2014-05-25 08:30,2014-05-27 08:30,2015-01-21 15:10,2015-01-24 15:10,,PT_Normal,,,,,QGWvpwGcJEOt2YnB5jpfCQ,9RlcQt6JZkSYN19U9hLZug,,,N,0,0,,,2014-04-13 07:21,2014-04-15 07:43,admin,admin,
4180,144277,6971,40707,7842,0,N,N,N,CP_Phys,TT_Task,DT_FixedDrtn,TK_NotStart,CZA-TK-0605-2180,Welding,8400,2076.666667,0,50,0,464.291349,464.291349,50,200,0,200,,,,2015-01-24 15:10,2015-01-29 15:10,,2014-05-27 08:30,2014-06-02 08:30,2014-05-27 08:30,2014-06-02 08:30,2014-05-27 08:30,2014-06-02 08:30,2015-01-24 15:10,2015-01-29 15:10,,PT_Normal,,,,,QZAeAEivBECKaySHNWcu8g,cLB7G3BNwkOxp8sH3Mg7LQ,,,N,0,0,,,2014-04-13 07:21,2014-04-15 07:43,admin,admin,
4181,144278,6971,40707,7842,0,N,N,N,CP_Phys,TT_Task,DT_FixedDrtn,TK_NotStart,CZA-TK-0605-2190,Inspection,8400,2076.666667,0,70,0,92.85827,92.85827,70,0,0,0,,,,2015-01-21 15:10,2015-01-29 15:10,,2014-05-25 08:30,2014-06-02 08:30,2014-05-25 08:30,2014-06-02 08:30,2014-05-25 08:30,2014-06-02 08:30,2015-01-21 15:10,2015-01-29 15:10,,PT_Normal,,,,,5RwqJybvCkycC5iB1aD2NA,aiuSGsLKpkmT5nuBsIzClw,,,N,0,0,,,2014-04-13 07:21,2014-04-15 07:43,admin,admin,
4182,144279,6971,40708,7842,0,N,N,N,CP_Phys,TT_Task,DT_FixedDrtn,TK_NotStart,CZA-TK-0605-2200,Laying and Fit-up,8400,2076.666667,0,20,0,573.952947,573.952947,20,80,0,80,,,,2015-01-29 15:10,2015-02-01 15:10,,2014-06-02 08:30,2014-06-04 08:30,2014-06-02 08:30,2014-06-04 08:30,2014-06-02 08:30,2014-06-04 08:30,2015-01-29 15:10,2015-02-01 15:10,,PT_Normal,,,,,jmLb4zL3xE2UP6h5DHKOyg,r3GNv2I/qEyJBVaOTCbHkg,,,N,0,0,,,2014-04-13 07:21,2014-04-15 07:43,admin,admin,
4183,144280,6971,40708,7842,0,N,N,N,CP_Phys,TT_Task,DT_FixedDrtn,TK_NotStart,CZA-TK-0605-2210,Welding,8400,2076.666667,0,50,0,717.441184,717.441184,50,200,0,200,,,,2015-02-01 15:10,2015-02-07 15:10,,2014-06-04 08:30,2014-06-10 08:30,2014-06-04 08:30,2014-06-10 08:30,2014-06-04 08:30,2014-06-10 08:30,2015-02-01 15:10,2015-02-07 15:10,,PT_Normal,,,,,5klseR5uN0SUZ68c4yOeQg,NEGqw/E8rkGmPRb5arz2Gg,,,N,0,0,,,2014-04-13 07:21,2014-04-15 07:43,admin,admin,
4184,144281,6971,40708,7842,0,N,N,N,CP_Phys,TT_Task,DT_FixedDrtn,TK_NotStart,CZA-TK-0605-2220,Inspection,8400,2076.666667,0,70,0,143.488237,143.488237,70,0,0,0,,,,2015-01-29 15:10,2015-02-07 15:10,,2014-06-02 08:30,2014-06-10 08:30,2014-06-02 08:30,2014-06-10 08:30,2014-06-02 08:30,2014-06-10 08:30,2015-01-29 15:10,2015-02-07 15:10,,PT_Normal,,,,,uPbJZSKHwkiHDwDnSnw8iw,7YFvv/IrdEurjRvbYkqRVA,,,N,0,0,,,2014-04-13 07:21,2014-04-15 07:43,admin,admin,
4185,144282,6971,40709,7842,0,N,N,N,CP_Phys,TT_Task,DT_FixedDrtn,TK_NotStart,CZA-TK-0605-1930,Laying and Fit-up,8400,2076.666667,0,10,0,211.904884,211.904884,10,40,0,40,,,,2014-11-18 07:40,2014-11-19 07:40,,2014-03-20 11:00,2014-03-22 11:00,2014-03-20 11:00,2014-03-22 11:00,2014-03-20 11:00,2014-03-22 11:00,2014-11-18 07:40,2014-11-19 07:40,,PT_Normal,,,,,pEV+ACXQd0eS2hbs7sdc9g,6QU++iAk3EKiq7c/3C9KtA,,,N,0,0,,,2014-04-13 07:21,2014-04-15 07:43,admin,admin,
4186,144283,6971,40709,7842,0,N,N,N,CP_Phys,TT_Task,DT_FixedDrtn,TK_NotStart,CZA-TK-0605-1940,Welding,8400,2076.666667,0,40,0,264.881105,264.881105,40,160,0,160,,,,2014-11-19 07:40,2014-11-24 07:40,,2014-03-22 11:00,2014-03-26 11:00,2014-03-22 11:00,2014-03-26 11:00,2014-03-22 11:00,2014-03-26 11:00,2014-11-19 07:40,2014-11-24 07:40,,PT_Normal,,,,,sJbvjUzC7UawTaWTytHAgw,YckaC1s6nkq95nfk0+vlPA,,,N,0,0,,,2014-04-13 07:21,2014-04-15 07:43,admin,admin,
4187,144284,6971,40709,7842,0,N,N,N,CP_Phys,TT_Task,DT_FixedDrtn,TK_NotStart,CZA-TK-0605-1950,Inspection,8400,2076.666667,0,50,0,52.976221,52.976221,50,0,0,0,,,,2014-11-18 07:40,2014-11-24 07:40,,2014-03-20 11:00,2014-03-26 11:00,2014-03-20 11:00,2014-03-26 11:00,2014-03-20 11:00,2014-03-26 11:00,2014-11-18 07:40,2014-11-24 07:40,,PT_Normal,,,,,USlmw/QyXUyM144F/5vQsg,OaHUGMl8ekqKU+qKw93fDQ,,,N,0,0,,,2014-04-13 07:21,2014-04-15 07:43,admin,admin,
4188,144285,6971,40710,7842,0,N,N,N,CP_Phys,TT_Task,DT_FixedDrtn,TK_NotStart,CZA-TK-0605-1960,Laying and Fit-up,8400,2076.666667,0,30,0,211.904884,211.904884,30,120,0,120,,,,2014-11-24 07:40,2014-11-27 07:40,,2014-03-26 11:00,2014-03-30 11:00,2014-03-26 11:00,2014-03-30 11:00,2014-03-26 11:00,2014-03-30 11:00,2014-11-24 07:40,2014-11-27 07:40,,PT_Normal,,,,,1Z/Fjx5hlUaEeoMH+moWsw,Csz+pivt/0Gz4ijmU/Vj/g,,,N,0,0,,,2014-04-13 07:21,2014-04-15 07:43,admin,admin,
4189,144286,6971,40710,7842,0,N,N,N,CP_Phys,TT_Task,DT_FixedDrtn,TK_NotStart,CZA-TK-0605-1970,Welding,8400,2076.666667,0,70,0,264.881105,264.881105,70,280,0,280,,,,2014-11-27 07:40,2014-12-06 07:40,,2014-03-30 11:00,2014-04-07 11:00,2014-03-30 11:00,2014-04-07 11:00,2014-03-30 11:00,2014-04-07 11:00,2014-11-27 07:40,2014-12-06 07:40,,PT_Normal,,,,,JYdHmIuc3E+/8QPlQeavdg,7BYecn6JOE+DDUc6WBtfHA,,,N,0,0,,,2014-04-13 07:21,2014-04-15 07:43,admin,admin,
4190,144287,6971,40710,7842,0,N,N,N,CP_Phys,TT_Task,DT_FixedDrtn,TK_NotStart,CZA-TK-0605-1980,Inspection,8400,2076.666667,0,100,0,52.976221,52.976221,100,0,0,0,,,,2014-11-24 07:40,2014-12-06 07:40,,2014-03-26 11:00,2014-04-07 11:00,2014-03-26 11:00,2014-04-07 11:00,2014-03-26 11:00,2014-04-07 11:00,2014-11-24 07:40,2014-12-06 07:40,,PT_Normal,,,,,w020C2HUckOQ80AsGGwMjA,M4jZF8iKX0OVH7NDBKwwhQ,,,N,0,0,,,2014-04-13 07:21,2014-04-15 07:43,admin,admin,
4191,144288,6971,40711,7842,0,N,N,N,CP_Phys,TT_Task,DT_FixedDrtn,TK_NotStart,CZA-TK-0605-1990,Erection and Fit-up,8400,2076.666667,0,10,0,135.375635,135.375635,10,40,0,40,,,,2014-12-06 07:40,2014-12-07 07:40,,2014-04-07 11:00,2014-04-08 11:00,2014-04-07 11:00,2014-04-08 11:00,2014-04-07 11:00,2014-04-08 11:00,2014-12-06 07:40,2014-12-07 07:40,,PT_Normal,,,,,/PC2qyD7EEGyiR6tR/d1PQ,8dgk4SqYXk6RCJK69JLkgQ,,,N,0,0,,,2014-04-13 07:21,2014-04-15 07:43,admin,admin,
4192,144289,6971,40711,7842,0,N,N,N,CP_Phys,TT_Task,DT_FixedDrtn,TK_NotStart,CZA-TK-0605-2000,Welding,8400,2076.666667,0,50,0,169.219544,169.219544,50,200,0,200,,,,2014-12-07 07:40,2014-12-13 07:40,,2014-04-08 11:00,2014-04-14 11:00,2014-04-08 11:00,2014-04-14 11:00,2014-04-08 11:00,2014-04-14 11:00,2014-12-07 07:40,2014-12-13 07:40,,PT_Normal,,,,,0eavXf2x90aQLR7rsvxBeA,Sdm7Euem70CsSI8Dj/7c5g,,,N,0,0,,,2014-04-13 07:21,2014-04-15 07:43,admin,admin,
4193,144290,6971,40711,7842,0,N,N,N,CP_Phys,TT_Task,DT_FixedDrtn,TK_NotStart,CZA-TK-0605-2010,Inspection,8400,2076.666667,0,60,0,33.843909,33.843909,60,0,0,0,,,,2014-12-06 07:40,2014-12-13 07:40,,2014-04-07 11:00,2014-04-14 11:00,2014-04-07 11:00,2014-04-14 11:00,2014-04-07 11:00,2014-04-14 11:00,2014-12-06 07:40,2014-12-13 07:40,,PT_Normal,,,,,9MVWh8eEx0WRHzOevik57A,f+2UogfiQUalKgRpA33png,,,N,0,0,,,2014-04-13 07:21,2014-04-15 07:43,admin,admin,
4194,144291,6971,40712,7842,0,N,N,N,CP_Phys,TT_Task,DT_FixedDrtn,TK_NotStart,CZA-TK-0605-2230,Laying and Fit-up,8400,2076.666667,0,10,0,0,0,10,40,0,40,,,,2015-02-07 15:10,2015-02-08 15:10,,2014-06-10 08:30,2014-06-11 08:30,2014-06-10 08:30,2014-06-11 08:30,2014-06-10 08:30,2014-06-11 08:30,2015-02-07 15:10,2015-02-08 15:10,,PT_Normal,,,,,uDsvQUpOuEey28qYG8qGtQ,oS+OJi0DGUeZimsiCUWifg,,,N,0,0,,,2014-04-13 07:21,2014-04-15 07:43,admin,admin,
4195,144292,6971,40712,7842,0,N,N,N,CP_Phys,TT_Task,DT_FixedDrtn,TK_NotStart,CZA-TK-0605-2240,Welding,8400,2076.666667,0,40,0,0,0,40,160,0,160,,,,2015-02-08 15:10,2015-02-12 15:10,,2014-06-11 08:30,2014-06-16 08:30,2014-06-11 08:30,2014-06-16 08:30,2014-06-11 08:30,2014-06-16 08:30,2015-02-08 15:10,2015-02-12 15:10,,PT_Normal,,,,,oSoUVfXfe0qxjk5qYf7Eyg,j+s8Zso9X0Kw7pajOV4CRg,,,N,0,0,,,2014-04-13 07:21,2014-04-15 07:43,admin,admin,
4196,144293,6971,40712,7842,0,N,N,N,CP_Phys,TT_Task,DT_FixedDrtn,TK_NotStart,CZA-TK-0605-2250,Inspection,8400,2076.666667,0,50,0,0,0,50,0,0,0,,,,2015-02-07 15:10,2015-02-12 15:10,,2014-06-10 08:30,2014-06-16 08:30,2014-06-10 08:30,2014-06-16 08:30,2014-06-10 08:30,2014-06-16 08:30,2015-02-07 15:10,2015-02-12 15:10,,PT_Normal,,,,,9ptOs8Laf0mdnOOhMS+HOA,2hROHFboAECg/KPVLL4KxQ,,,N,0,0,,,2014-04-13 07:21,2014-04-15 07:43,admin,admin,
4197,144294,6971,40713,7842,0,N,N,N,CP_Phys,TT_Task,DT_FixedDrtn,TK_NotStart,CZA-TK-0605-2260,"Cutting,lnstallation and Fit-up",8400,2076.666667,0,20,0,0,0,20,20,0,20,,,,2015-02-12 15:10,2015-02-15 15:10,,2014-06-16 08:30,2014-06-18 08:30,2014-06-16 08:30,2014-06-18 08:30,2014-06-16 08:30,2014-06-18 08:30,2015-02-12 15:10,2015-02-15 15:10,,PT_Normal,,,,,Av3jQWEQHkWhZl1guaASOQ,2xR9n4nlM062dMbuavsGNA,,,N,0,0,,,2014-04-13 07:21,2014-04-15 07:43,admin,admin,
4198,144295,6971,40713,7842,0,N,N,N,CP_Phys,TT_Task,DT_FixedDrtn,TK_NotStart,CZA-TK-0605-2270,Welding,8400,2076.666667,0,50,0,0,0,50,200,0,200,,,,2015-02-15 15:10,2015-02-21 15:10,,2014-06-18 08:30,2014-06-24 08:30,2014-06-18 08:30,2014-06-24 08:30,2014-06-18 08:30,2014-06-24 08:30,2015-02-15 15:10,2015-02-21 15:10,,PT_Normal,,,,,mmL4emEJUEyvwC2r90xfDw,tweg9y0iTk6dag6F844RfQ,,,N,0,0,,,2014-04-13 07:21,2014-04-15 07:43,admin,admin,
4199,144296,6971,40713,7842,0,N,N,N,CP_Phys,TT_Task,DT_FixedDrtn,TK_NotStart,CZA-TK-0605-2280,Inspection,8400,2076.666667,0,68.666667,0,0,0,68.666667,0,0,0,,,,2015-02-12 16:30,2015-02-21 15:10,,2014-06-16 09:50,2014-06-24 08:30,2014-06-16 09:50,2014-06-24 08:30,2014-06-16 09:50,2014-06-24 08:30,2015-02-12 16:30,2015-02-21 15:10,,PT_Normal,,,,,D/bwPZeTckKBAymuPdt3EQ,UZkWxHaQEUSALhCiN1lvqw,,,N,0,0,,,2014-04-13 07:21,2014-04-15 07:43,admin,admin,
4200,144297,6971,40714,7842,0,N,N,N,CP_Phys,TT_Task,DT_FixedDrtn,TK_NotStart,CZA-TK-0605-2290,Erection and Fit-up,8400,2076.666667,0,40,0,0,0,40,160,0,160,,,,2015-02-12 16:30,2015-02-17 16:30,,2014-06-16 09:50,2014-06-21 09:50,2014-06-16 09:50,2014-06-21 09:50,2014-06-16 09:50,2014-06-21 09:50,2015-02-12 16:30,2015-02-17 16:30,,PT_Normal,,,,,xN/JUXLfwke4LwCd24M03g,ZokLDo6/G0Wzjc9CvdEWfQ,,,N,0,0,,,2014-04-13 07:21,2014-04-15 07:43,admin,admin,
4201,144298,6971,40714,7842,0,N,N,N,CP_Phys,TT_Task,DT_FixedDrtn,TK_NotStart,CZA-TK-0605-2300,Welding,8400,2076.666667,0,100,0,0,0,100,400,0,400,,,,2015-02-17 16:30,2015-03-01 16:30,,2014-06-21 09:50,2014-07-02 09:50,2014-06-21 09:50,2014-07-02 09:50,2014-06-21 09:50,2014-07-02 09:50,2015-02-17 16:30,2015-03-01 16:30,,PT_Normal,,,,,AKzVOZCDaECk/LOgSpq7cQ,XpE5nGyzxEOkLPjH2E2jsQ,,,N,0,0,,,2014-04-13 07:21,2014-04-15 07:43,admin,admin,
4202,144299,6971,40714,7842,0,N,N,N,CP_Phys,TT_Task,DT_FixedDrtn,TK_NotStart,CZA-TK-0605-2310,Inspection,8400,2076.666667,0,140,0,0,0,140,0,0,0,,,,2015-02-12 16:30,2015-03-01 16:30,,2014-06-16 09:50,2014-07-02 09:50,2014-06-16 09:50,2014-07-02 09:50,2014-06-16 09:50,2014-07-02 09:50,2015-02-12 16:30,2015-03-01 16:30,,PT_Normal,,,,,6BQ7JCwtEkam/xd19jVMHw,BPOVe0A5RkC9raWx+Te4VA,,,N,0,0,,,2014-04-13 07:21,2014-04-15 07:43,admin,admin,
4203,144300,6971,40715,7842,0,N,N,N,CP_Phys,TT_Task,DT_FixedDrtn,TK_NotStart,CZA-TK-0605-2320,"Jacking, Erection and Fit-up",8400,2076.666667,0,10,0,157.944195,157.944195,10,40,0,40,,,,2015-03-01 16:30,2015-03-02 16:30,,2014-07-02 09:50,2014-07-03 09:50,2014-07-02 09:50,2014-07-03 09:50,2014-07-02 09:50,2014-07-03 09:50,2015-03-01 16:30,2015-03-02 16:30,,PT_Normal,,,,,HtOB/gxQ20GIfRoN9FQtJA,UINmdKdn90S+cZImUyli+w,,,N,0,0,,,2014-04-13 07:21,2014-04-15 07:43,admin,admin,
4204,144301,6971,40715,7842,0,N,N,N,CP_Phys,TT_Task,DT_FixedDrtn,TK_NotStart,CZA-TK-0605-2330,Welding,8400,2076.666667,0,50,0,197.430244,197.430244,50,200,0,200,,,,2015-03-02 16:30,2015-03-08 16:30,,2014-07-03 09:50,2014-07-09 09:50,2014-07-03 09:50,2014-07-09 09:50,2014-07-03 09:50,2014-07-09 09:50,2015-03-02 16:30,2015-03-08 16:30,,PT_Normal,,,,,LCt/T9KiPEaladonBo29Iw,aPjlkcEddESC+cIOeG3RnA,,,N,0,0,,,2014-04-13 07:21,2014-04-15 07:43,admin,admin,
4205,144302,6971,40715,7842,0,N,N,N,CP_Phys,TT_Task,DT_FixedDrtn,TK_NotStart,CZA-TK-0605-2340,Inspection,8400,2076.666667,0,60,0,39.486049,39.486049,60,0,0,0,,,,2015-03-01 16:30,2015-03-08 16:30,,2014-07-02 09:50,2014-07-09 09:50,2014-07-02 09:50,2014-07-09 09:50,2014-07-02 09:50,2014-07-09 09:50,2015-03-01 16:30,2015-03-08 16:30,,PT_Normal,,,,,U6xFe1l1CE6bkrpFkQv4Nw,t39e8WmBaUawwtFNOSsSNg,,,N,0,0,,,2014-04-13 07:21,2014-04-15 07:43,admin,admin,
4206,144303,6971,40716,7842,0,N,N,N,CP_Phys,TT_Task,DT_FixedDrtn,TK_NotStart,CZA-TK-0605-2350,"Jacking,Erection and Fit-up",8400,2076.666667,0,10,0,203.084597,203.084597,10,40,0,40,,,,2015-03-08 16:30,2015-03-09 16:30,,2014-07-09 09:50,2014-07-10 09:50,2014-07-09 09:50,2014-07-10 09:50,2014-07-09 09:50,2014-07-10 09:50,2015-03-08 16:30,2015-03-09 16:30,,PT_Normal,,,,,EBRCUWhO702snbQ5wjFfmg,nLbGG+qwMkmr4cvtb68bgA,,,N,0,0,,,2014-04-13 07:21,2014-04-15 07:43,admin,admin,
4207,144304,6971,40716,7842,0,N,N,N,CP_Phys,TT_Task,DT_FixedDrtn,TK_NotStart,CZA-TK-0605-2360,Welding,8400,2076.666667,0,50,0,253.855747,253.855747,50,200,0,200,,,,2015-03-09 16:30,2015-03-15 16:30,,2014-07-10 09:50,2014-07-16 09:50,2014-07-10 09:50,2014-07-16 09:50,2014-07-10 09:50,2014-07-16 09:50,2015-03-09 16:30,2015-03-15 16:30,,PT_Normal,,,,,p7ClGeEk20q/vz6YcC0oSA,3TPI+QYiEUGgtShmybbdOw,,,N,0,0,,,2014-04-13 07:21,2014-04-15 07:43,admin,admin,
4208,144305,6971,40716,7842,0,N,N,N,CP_Phys,TT_Task,DT_FixedDrtn,TK_NotStart,CZA-TK-0605-2370,Inspection,8400,2076.666667,0,60,0,50.771149,50.771149,60,0,0,0,,,,2015-03-08 16:30,2015-03-15 16:30,,2014-07-09 09:50,2014-07-16 09:50,2014-07-09 09:50,2014-07-16 09:50,2014-07-09 09:50,2014-07-16 09:50,2015-03-08 16:30,2015-03-15 16:30,,PT_Normal,,,,,FqaNlgYrjkSfOkkqZUNT3g,QYGlpj/sd0Kc3dOYy4ob8g,,,N,0,0,,,2014-04-13 07:21,2014-04-15 07:43,admin,admin,
4209,144306,6971,40125,7842,0,N,N,N,CP_Phys,TT_Task,DT_FixedDrtn,TK_NotStart,CZA-TK-0605-2700,Tank Calibration,8400,962,0,50,0,1170.171995,1170.171995,50,0,0,0,,,,2015-06-20 15:00,2015-06-25 15:00,,2015-02-28 13:00,2015-03-05 13:00,2015-02-28 13:00,2015-03-05 13:00,2015-02-28 13:00,2015-03-05 13:00,2015-06-20 15:00,2015-06-25 15:00,,PT_Normal,,,,,Rqb4vdM+q0+fDRTxd99Q9A,Ue2H+T4knE+wsQex+OAKZA,,,N,0,0,,,2014-04-13 07:21,2014-04-14 16:04,admin,admin,
4210,144307,6971,40125,7842,0,N,N,N,CP_Phys,TT_Task,DT_FixedDrtn,TK_NotStart,CZA-TK-0605-2710,Tank Handover,8400,962,962,20,0,1170.171995,1170.171995,20,0,0,0,,,,2015-06-25 15:00,2015-06-28 15:00,,2015-03-05 13:00,2015-03-08 13:00,2015-03-05 13:00,2015-03-08 13:00,2015-03-05 13:00,2015-03-08 13:00,2015-06-25 15:00,2015-06-28 15:00,,PT_Normal,,,,,uM75zE03/Em5/2pgvdJYrw,/1/Vg+8LOEWgBkMhMYXnlg,,,N,0,0,,,2014-04-13 07:21,2014-04-14 16:04,admin,admin,
4211,144308,6971,40083,7842,0,N,N,N,CP_Phys,TT_Mile,DT_FixedDrtn,TK_NotStart,CZA-TK-0521-2720,Foundation Takeover from Client,,0,0,0,0,0,0,0,0,0,0,2014-04-10 13:00,,,2014-04-10 13:00,2014-04-10 13:00,,2014-04-10 13:00,2014-04-10 13:00,2014-04-10 13:00,2014-04-10 13:00,2014-04-10 13:00,2014-04-10 13:00,2014-04-10 13:00,2014-04-10 13:00,CS_MSO,PT_Normal,,,,,EKqQLOlcpE6B5zcO5VcXjw,Y6PAgMKf4EuEhaSTV7Fvow,,,N,0,0,,,2014-04-13 07:21,2014-04-13 07:21,admin,admin,
4212,144309,6971,40721,7842,0,N,N,N,CP_Phys,TT_Task,DT_FixedDrtn,TK_NotStart,CZA-TK-0521-3050,Erection and Fit-up,8392,2412,0,10,0,18.71172,18.71172,10,0,0,0,,,,2015-02-01 15:00,2015-02-02 15:00,,2014-04-26 13:00,2014-04-27 13:00,2014-04-26 13:00,2014-04-27 13:00,2014-04-26 13:00,2014-04-27 13:00,2015-02-01 15:00,2015-02-02 15:00,,PT_Normal,,,,,cKE8nNBQLE6kt2hLFCsBWw,D68DUsnWE0i4sElE579fCw,,,N,0,0,,,2014-04-13 07:21,2014-04-14 16:04,admin,admin,
4213,144310,6971,40721,7842,0,N,N,N,CP_Phys,TT_Task,DT_FixedDrtn,TK_NotStart,CZA-TK-0521-3060,Welding,8392,2412,0,30,0,23.38965,23.38965,30,90,0,90,,,,2015-02-02 15:00,2015-02-05 15:00,,2014-04-27 13:00,2014-04-30 13:00,2014-04-27 13:00,2014-04-30 13:00,2014-04-27 13:00,2014-04-30 13:00,2015-02-02 15:00,2015-02-05 15:00,,PT_Normal,,,,,ZLwGLiJeD0KH0QfzPEdIaA,wy38G26x90WrnXjL9ZPm/Q,,,N,0,0,,,2014-04-13 07:21,2014-04-14 16:04,admin,admin,
4214,144311,6971,40721,7842,0,N,N,N,CP_Phys,TT_Task,DT_FixedDrtn,TK_NotStart,CZA-TK-0521-3070,Inspection,8392,2412,0,40,0,4.67793,4.67793,40,0,0,0,,,,2015-02-01 15:00,2015-02-05 15:00,,2014-04-26 13:00,2014-04-30 13:00,2014-04-26 13:00,2014-04-30 13:00,2014-04-26 13:00,2014-04-30 13:00,2015-02-01 15:00,2015-02-05 15:00,,PT_Normal,,,,,eAN/4SQtWk2267TUdU+Wbg,T9foJus53kSJDAFmyr1yRw,,,N,0,0,,,2014-04-13 07:21,2014-04-14 16:04,admin,admin,
4215,144312,6971,40722,7842,0,N,N,N,CP_Phys,TT_Task,DT_FixedDrtn,TK_NotStart,CZA-TK-0521-3080,"Cutting, Installation and Fit-up",8392,2412,0,20,0,0,0,20,60,0,60,,,,2015-02-05 15:00,2015-02-08 15:00,,2014-04-30 13:00,2014-05-03 13:00,2014-04-30 13:00,2014-05-03 13:00,2014-04-30 13:00,2014-05-03 13:00,2015-02-05 15:00,2015-02-08 15:00,,PT_Normal,,,,,wd+f/8vzikWP0fxrmJYbdw,z4qv9rNjXUCYHESjAp1N9g,,,N,0,0,,,2014-04-13 07:21,2014-04-14 16:04,admin,admin,
4216,144313,6971,40722,7842,0,N,N,N,CP_Phys,TT_Task,DT_FixedDrtn,TK_NotStart,CZA-TK-0521-3090,Welding,8392,2412,0,30,0,0,0,30,90,0,90,,,,2015-02-08 15:00,2015-02-11 15:00,,2014-05-03 13:00,2014-05-06 13:00,2014-05-03 13:00,2014-05-06 13:00,2014-05-03 13:00,2014-05-06 13:00,2015-02-08 15:00,2015-02-11 15:00,,PT_Normal,,,,,kkWAcR4IFkGhZVMoeBap4Q,HgjsRiHHnE+3yPgpguQ5RQ,,,N,0,0,,,2014-04-13 07:21,2014-04-14 16:04,admin,admin,
4217,144314,6971,40722,7842,0,N,N,N,CP_Phys,TT_Task,DT_FixedDrtn,TK_NotStart,CZA-TK-0521-3100,Inspection,8392,2412,0,50,0,0,0,50,0,0,0,,,,2015-02-05 15:00,2015-02-11 15:00,,2014-04-30 13:00,2014-05-06 13:00,2014-04-30 13:00,2014-05-06 13:00,2014-04-30 13:00,2014-05-06 13:00,2015-02-05 15:00,2015-02-11 15:00,,PT_Normal,,,,,6ZgswDh59UyCcS5ihmOUGA,IkjYK2N970aP0veftWpOxg,,,N,0,0,,,2014-04-13 07:21,2014-04-14 16:04,admin,admin,
4218,144315,6971,40723,7842,0,N,N,N,CP_Phys,TT_Task,DT_FixedDrtn,TK_NotStart,CZA-TK-0521-3110,Laying & Fit-up,8392,2412,0,20,0,209.98743,209.98743,20,60,0,60,,,,2015-02-11 15:00,2015-02-14 15:00,,2014-05-06 13:00,2014-05-08 13:00,2014-05-06 13:00,2014-05-08 13:00,2014-05-06 13:00,2014-05-08 13:00,2015-02-11 15:00,2015-02-14 15:00,,PT_Normal,,,,,rlDHXdvqVUqKz5heFnwNHg,MPVa66bKM0q1y6EBtDMv/w,,,N,0,0,,,2014-04-13 07:21,2014-04-14 16:04,admin,admin,
4219,144316,6971,40723,7842,0,N,N,N,CP_Phys,TT_Task,DT_FixedDrtn,TK_NotStart,CZA-TK-0521-3120,Welding,8392,2412,0,70,0,262.484288,262.484288,70,210,0,210,,,,2015-02-14 15:00,2015-02-22 15:00,,2014-05-08 13:00,2014-05-17 13:00,2014-05-08 13:00,2014-05-17 13:00,2014-05-08 13:00,2014-05-17 13:00,2015-02-14 15:00,2015-02-22 15:00,,PT_Normal,,,,,n1iawECRBUev2MpdLCci2A,rR+vgDBLQUWzhmzLotLrZA,,,N,0,0,,,2014-04-13 07:21,2014-04-14 16:04,admin,admin,
4220,144317,6971,40723,7842,0,N,N,N,CP_Phys,TT_Task,DT_FixedDrtn,TK_NotStart,CZA-TK-0521-3130,Inspection,8392,2412,0,90,0,52.496858,52.496858,90,0,0,0,,,,2015-02-11 15:00,2015-02-22 15:00,,2014-05-06 13:00,2014-05-17 13:00,2014-05-06 13:00,2014-05-17 13:00,2014-05-06 13:00,2014-05-17 13:00,2015-02-11 15:00,2015-02-22 15:00,,PT_Normal,,,,,o7m/GDamlEKS8xmwFFH8Sw,lgHkrGj+e0CPlH2wzTjEIA,,,N,0,0,,,2014-04-13 07:21,2014-04-14 16:04,admin,admin,
4221,144318,6971,40724,7842,0,N,N,N,CP_Phys,TT_Task,DT_FixedDrtn,TK_NotStart,CZA-TK-0521-3140,"Cutting of All Holes, Laying & Fit-up",8392,2412,0,30,0,21.407187,21.407187,30,90,0,90,,,,2015-02-22 15:00,2015-02-25 15:00,,2014-05-17 13:00,2014-05-20 13:00,2014-05-17 13:00,2014-05-20 13:00,2014-05-17 13:00,2014-05-20 13:00,2015-02-22 15:00,2015-02-25 15:00,,PT_Normal,,,,,1WiH4DBkS0mTqo+2YtVdmg,SRrXXtXeaUSFZqhYlwyZSg,,,N,0,0,,,2014-04-13 07:21,2014-04-14 16:04,admin,admin,
4222,144319,6971,40724,7842,0,N,N,N,CP_Phys,TT_Task,DT_FixedDrtn,TK_NotStart,CZA-TK-0521-3150,Welding of Sleeves and Plates,8392,2412,0,100,0,26.758984,26.758984,100,300,0,300,,,,2015-02-25 15:00,2015-03-09 15:00,,2014-05-20 13:00,2014-06-01 13:00,2014-05-20 13:00,2014-06-01 13:00,2014-05-20 13:00,2014-06-01 13:00,2015-02-25 15:00,2015-03-09 15:00,,PT_Normal,,,,,9fSr0yUmpkuIFilv37V/CQ,tcbtbmx0v0GyGwu2343IHw,,,N,0,0,,,2014-04-13 07:21,2014-04-14 16:04,admin,admin,
4223,144320,6971,40724,7842,0,N,N,N,CP_Phys,TT_Task,DT_FixedDrtn,TK_NotStart,CZA-TK-0521-3160,Installation of Leg Support,8392,2412,0,10,0,2.675898,2.675898,10,30,0,30,,,,2015-03-09 15:00,2015-03-10 15:00,,2014-06-01 13:00,2014-06-02 13:00,2014-06-01 13:00,2014-06-02 13:00,2014-06-01 13:00,2014-06-02 13:00,2015-03-09 15:00,2015-03-10 15:00,,PT_Normal,,,,,4dCyyOMCdUSwb5miB+f+DQ,2HHBWmjQmkqZWTQxju2FmA,,,N,0,0,,,2014-04-13 07:21,2014-04-14 16:04,admin,admin,
4224,144321,6971,40724,7842,0,N,N,N,CP_Phys,TT_Task,DT_FixedDrtn,TK_NotStart,CZA-TK-0521-3170,Inspection,8392,2412,0,140,0,2.675898,2.675898,140,0,0,0,,,,2015-02-22 15:00,2015-03-10 15:00,,2014-05-17 13:00,2014-06-02 13:00,2014-05-17 13:00,2014-06-02 13:00,2014-05-17 13:00,2014-06-02 13:00,2015-02-22 15:00,2015-03-10 15:00,,PT_Normal,,,,,jeY4WmbM1kqVs2dMvyLDiQ,ogqBflgVu0OtC0pctx0eIw,,,N,0,0,,,2014-04-13 07:21,2014-04-14 16:04,admin,admin,
4225,144322,6971,40725,7842,0,N,N,N,CP_Phys,TT_Task,DT_FixedDrtn,TK_NotStart,CZA-TK-0521-3180,Erection and Fit-up,8392,2412,0,10,0,0,0,10,30,0,30,,,,2015-03-10 15:00,2015-03-11 15:00,,2014-06-02 13:00,2014-06-03 13:00,2014-06-02 13:00,2014-06-03 13:00,2014-06-02 13:00,2014-06-03 13:00,2015-03-10 15:00,2015-03-11 15:00,,PT_Normal,,,,,aDVNYFtot0i11sVyCSKEEA,Axf4dH3BjUSuFzTIK/XL3g,,,N,0,0,,,2014-04-13 07:21,2014-04-14 16:04,admin,admin,
4226,144323,6971,40725,7842,0,N,N,N,CP_Phys,TT_Task,DT_FixedDrtn,TK_NotStart,CZA-TK-0521-3190,Welding,8392,2412,0,30,0,0,0,30,90,0,90,,,,2015-03-11 15:00,2015-03-15 15:00,,2014-06-03 13:00,2014-06-07 13:00,2014-06-03 13:00,2014-06-07 13:00,2014-06-03 13:00,2014-06-07 13:00,2015-03-11 15:00,2015-03-15 15:00,,PT_Normal,,,,,er1ze6KZ/0SivLyBdYxMUQ,UyCGQo3ec0CnIdJAp+KkPA,,,N,0,0,,,2014-04-13 07:21,2014-04-14 16:04,admin,admin,
4227,144324,6971,40725,7842,0,N,N,N,CP_Phys,TT_Task,DT_FixedDrtn,TK_NotStart,CZA-TK-0521-3200,Inspection,8392,2412,0,40,0,0,0,40,0,0,0,,,,2015-03-10 15:00,2015-03-15 15:00,,2014-06-02 13:00,2014-06-07 13:00,2014-06-02 13:00,2014-06-07 13:00,2014-06-02 13:00,2014-06-07 13:00,2015-03-10 15:00,2015-03-15 15:00,,PT_Normal,,,,,wbEp0IXYSUy5zXCB7+h+5w,zuL114M2T06ewVP0WnzmOg,,,N,0,0,,,2014-04-13 07:21,2014-04-14 16:04,admin,admin,
4228,144325,6971,40726,7842,0,N,N,N,CP_Phys,TT_Task,DT_FixedDrtn,TK_NotStart,CZA-TK-0521-3210,Erection and Fit-up,8392,2412,0,10,0,0,0,10,30,0,30,,,,2015-03-15 15:00,2015-03-16 15:00,,2014-06-07 13:00,2014-06-08 13:00,2014-06-07 13:00,2014-06-08 13:00,2014-06-07 13:00,2014-06-08 13:00,2015-03-15 15:00,2015-03-16 15:00,,PT_Normal,,,,,2C6jNHPMSUWMCI6WR/5hYw,0qN2kmcIeUKFqPY1z7SlTw,,,N,0,0,,,2014-04-13 07:21,2014-04-14 16:04,admin,admin,
4229,144326,6971,40726,7842,0,N,N,N,CP_Phys,TT_Task,DT_FixedDrtn,TK_NotStart,CZA-TK-0521-3220,Welding,8392,2412,0,30,0,0,0,30,90,0,90,,,,2015-03-16 15:00,2015-03-19 15:00,,2014-06-08 13:00,2014-06-11 13:00,2014-06-08 13:00,2014-06-11 13:00,2014-06-08 13:00,2014-06-11 13:00,2015-03-16 15:00,2015-03-19 15:00,,PT_Normal,,,,,Ym5FxpZaHEa+oZD4Ru24LQ,qehP0zunBkGD1B+TPKFOiQ,,,N,0,0,,,2014-04-13 07:21,2014-04-14 16:04,admin,admin,
4230,144327,6971,40726,7842,0,N,N,N,CP_Phys,TT_Task,DT_FixedDrtn,TK_NotStart,CZA-TK-0521-3230,Inspection,8392,2412,0,40,0,0,0,40,0,0,0,,,,2015-03-15 15:00,2015-03-19 15:00,,2014-06-07 13:00,2014-06-11 13:00,2014-06-07 13:00,2014-06-11 13:00,2014-06-07 13:00,2014-06-11 13:00,2015-03-15 15:00,2015-03-19 15:00,,PT_Normal,,,,,zlwpFu8fK0uV3Jl1PuJeFQ,tk2DdTer8EqzdPK1pn6PQA,,,N,0,0,,,2014-04-13 07:21,2014-04-14 16:04,admin,admin,
4231,144328,6971,40727,7842,0,N,N,N,CP_Phys,TT_Task,DT_FixedDrtn,TK_NotStart,CZA-TK-0521-3240,Erection and Fit-up,8392,2412,0,10,0,162.115707,162.115707,10,0,0,0,,,,2015-03-19 15:00,2015-03-21 15:00,,2014-06-11 13:00,2014-06-12 13:00,2014-06-11 13:00,2014-06-12 13:00,2014-06-11 13:00,2014-06-12 13:00,2015-03-19 15:00,2015-03-21 15:00,,PT_Normal,,,,,f6qXlh21ukOiGj/RUNfSig,xUaji4G4uU6Fja8TQshkKg,,,N,0,0,,,2014-04-13 07:21,2014-04-14 16:04,admin,admin,
4232,144329,6971,40727,7842,0,N,N,N,CP_Phys,TT_Task,DT_FixedDrtn,TK_NotStart,CZA-TK-0521-3250,Welding,8392,2412,0,30,0,202.644634,202.644634,30,90,0,90,,,,2015-03-21 15:00,2015-03-24 15:00,,2014-06-12 13:00,2014-06-16 13:00,2014-06-12 13:00,2014-06-16 13:00,2014-06-12 13:00,2014-06-16 13:00,2015-03-21 15:00,2015-03-24 15:00,,PT_Normal,,,,,masi+x/dMEqlC74QUS6dRQ,JjzjQpdX9k6M1VptFadbMw,,,N,0,0,,,2014-04-13 07:21,2014-04-14 16:04,admin,admin,
4233,144330,6971,40727,7842,0,N,N,N,CP_Phys,TT_Task,DT_FixedDrtn,TK_NotStart,CZA-TK-0521-3260,Inspection,8392,2412,0,40,0,40.528927,40.528927,40,0,0,0,,,,2015-03-19 15:00,2015-03-24 15:00,,2014-06-11 13:00,2014-06-16 13:00,2014-06-11 13:00,2014-06-16 13:00,2014-06-11 13:00,2014-06-16 13:00,2015-03-19 15:00,2015-03-24 15:00,,PT_Normal,,,,,DJyH7FW+d0GsPN6SorlWsA,+KR8pm5UhkeDwupwp2W3jw,,,N,0,0,,,2014-04-13 07:21,2014-04-14 16:04,admin,admin,
4234,144331,6971,40728,7842,0,N,N,N,CP_Phys,TT_Task,DT_FixedDrtn,TK_NotStart,CZA-TK-0521-3270,Erection and Fit-up,8392,2412,0,10,0,46.194739,46.194739,10,0,0,0,,,,2015-03-24 15:00,2015-03-25 15:00,,2014-06-16 13:00,2014-06-17 13:00,2014-06-16 13:00,2014-06-17 13:00,2014-06-16 13:00,2014-06-17 13:00,2015-03-24 15:00,2015-03-25 15:00,,PT_Normal,,,,,rRZwmJSWqEit0t8ShTF/ZA,NEEpe1M+4E2VSP+5ODkBvQ,,,N,0,0,,,2014-04-13 07:21,2014-04-14 16:04,admin,admin,
4235,144332,6971,40728,7842,0,N,N,N,CP_Phys,TT_Task,DT_FixedDrtn,TK_NotStart,CZA-TK-0521-3280,Welding,8392,2412,0,30,0,57.743424,57.743424,30,90,0,90,,,,2015-03-25 15:00,2015-03-29 15:00,,2014-06-17 13:00,2014-06-21 13:00,2014-06-17 13:00,2014-06-21 13:00,2014-06-17 13:00,2014-06-21 13:00,2015-03-25 15:00,2015-03-29 15:00,,PT_Normal,,,,,0hC/0djeX0isHrDYrSaFOQ,CVddJLXU70+cMdgXkx99cA,,,N,0,0,,,2014-04-13 07:21,2014-04-14 16:04,admin,admin,
4236,144333,6971,40728,7842,0,N,N,N,CP_Phys,TT_Task,DT_FixedDrtn,TK_NotStart,CZA-TK-0521-3290,Inspection,8392,2412,0,40,0,11.548685,11.548685,40,0,0,0,,,,2015-03-24 15:00,2015-03-29 15:00,,2014-06-16 13:00,2014-06-21 13:00,2014-06-16 13:00,2014-06-21 13:00,2014-06-16 13:00,2014-06-21 13:00,2015-03-24 15:00,2015-03-29 15:00,,PT_Normal,,,,,sgSDYvsk5Ey6RvFlT5DBEQ,r9gYiEYaEU+kb/7jFZFiZg,,,N,0,0,,,2014-04-13 07:21,2014-04-14 16:04,admin,admin,
4237,144334,6971,40729,7842,0,N,N,N,CP_Phys,TT_Task,DT_FixedDrtn,TK_NotStart,CZA-TK-0521-3300,"Cutting, Installation and Fit-up",8392,2412,0,20,0,0,0,20,60,0,60,,,,2015-03-29 15:00,2015-03-31 15:00,,2014-06-21 13:00,2014-06-23 13:00,2014-06-21 13:00,2014-06-23 13:00,2014-06-21 13:00,2014-06-23 13:00,2015-03-29 15:00,2015-03-31 15:00,,PT_Normal,,,,,t7spVvdKlESg685dQsa7Ww,L1gDB7bBzU+XDE/JzhdjLQ,,,N,0,0,,,2014-04-13 07:21,2014-04-14 16:04,admin,admin,
4238,144335,6971,40729,7842,0,N,N,N,CP_Phys,TT_Task,DT_FixedDrtn,TK_NotStart,CZA-TK-0521-3310,Welding,8392,2412,0,50,0,0,0,50,150,0,150,,,,2015-03-31 15:00,2015-04-06 15:00,,2014-06-23 13:00,2014-06-29 13:00,2014-06-23 13:00,2014-06-29 13:00,2014-06-23 13:00,2014-06-29 13:00,2015-03-31 15:00,2015-04-06 15:00,,PT_Normal,,,,,JzE3m0Frsk+bzJS8nYGSAw,zSunwcsC80OPbD6NJhxBNw,,,N,0,0,,,2014-04-13 07:21,2014-04-14 16:04,admin,admin,
4239,144336,6971,40729,7842,0,N,N,N,CP_Phys,TT_Task,DT_FixedDrtn,TK_NotStart,CZA-TK-0521-3320,Inspection,8392,2412,0,70,0,0,0,70,0,0,0,,,,2015-03-29 15:00,2015-04-06 15:00,,2014-06-21 13:00,2014-06-29 13:00,2014-06-21 13:00,2014-06-29 13:00,2014-06-21 13:00,2014-06-29 13:00,2015-03-29 15:00,2015-04-06 15:00,,PT_Normal,,,,,/1U+XFLxukiru4H/oA9OHg,TusVA2Z5I0GXRI5mUxKf4w,,,N,0,0,,,2014-04-13 07:21,2014-04-14 16:04,admin,admin,
4240,144337,6971,40730,7842,0,N,N,N,CP_Phys,TT_Task,DT_FixedDrtn,TK_NotStart,CZA-TK-0521-3330,Erection and Fit-up,8392,2412,0,10,0,3.721042,3.721042,10,0,0,0,,,,2015-04-06 15:00,2015-04-07 15:00,,2014-06-29 13:00,2014-06-30 13:00,2014-06-29 13:00,2014-06-30 13:00,2014-06-29 13:00,2014-06-30 13:00,2015-04-06 15:00,2015-04-07 15:00,,PT_Normal,,,,,wE0s+hLeZk+3PJiLGGud3Q,t9Pu4LdYTky8L/1kbfcmcQ,,,N,0,0,,,2014-04-13 07:21,2014-04-14 16:04,admin,admin,
4241,144338,6971,40730,7842,0,N,N,N,CP_Phys,TT_Task,DT_FixedDrtn,TK_NotStart,CZA-TK-0521-3340,Welding,8392,2412,0,30,0,4.651302,4.651302,30,90,0,90,,,,2015-04-07 15:00,2015-04-11 15:00,,2014-06-30 13:00,2014-07-03 13:00,2014-06-30 13:00,2014-07-03 13:00,2014-06-30 13:00,2014-07-03 13:00,2015-04-07 15:00,2015-04-11 15:00,,PT_Normal,,,,,1YF9dsuF1U+gO8JifEvgjA,h4g4iaqKlkW/jW5Hyq9LBA,,,N,0,0,,,2014-04-13 07:21,2014-04-14 16:04,admin,admin,
4242,144339,6971,40730,7842,0,N,N,N,CP_Phys,TT_Task,DT_FixedDrtn,TK_NotStart,CZA-TK-0521-3350,Inspection,8392,2412,0,40,0,0.93026,0.93026,40,0,0,0,,,,2015-04-06 15:00,2015-04-11 15:00,,2014-06-29 13:00,2014-07-03 13:00,2014-06-29 13:00,2014-07-03 13:00,2014-06-29 13:00,2014-07-03 13:00,2015-04-06 15:00,2015-04-11 15:00,,PT_Normal,,,,,ee1Bo8P5sUuwsxxXVwvDoA,lqWTHummv0+oGtgmo3A38A,,,N,0,0,,,2014-04-13 07:21,2014-04-14 16:04,admin,admin,
4243,144340,6971,40731,7842,0,N,N,N,CP_Phys,TT_Task,DT_FixedDrtn,TK_NotStart,CZA-TK-0521-3360,Laying and Fit-up,8392,2412,0,20,0,197.425483,197.425483,20,60,0,60,,,,2015-04-11 15:00,2015-04-13 15:00,,2014-07-03 13:00,2014-07-06 13:00,2014-07-03 13:00,2014-07-06 13:00,2014-07-03 13:00,2014-07-06 13:00,2015-04-11 15:00,2015-04-13 15:00,,PT_Normal,,,,,Gf4aYwZYj0GiNNKorPTyqw,RBLKmB4s8kCZ15pGnQwzsw,,,N,0,0,,,2014-04-13 07:21,2014-04-14 16:04,admin,admin,
4244,144341,6971,40731,7842,0,N,N,N,CP_Phys,TT_Task,DT_FixedDrtn,TK_NotStart,CZA-TK-0521-3370,Welding,8392,2412,0,40,0,78.970193,78.970193,40,120,0,120,,,,2015-04-13 15:00,2015-04-18 15:00,,2014-07-06 13:00,2014-07-10 13:00,2014-07-06 13:00,2014-07-10 13:00,2014-07-06 13:00,2014-07-10 13:00,2015-04-13 15:00,2015-04-18 15:00,,PT_Normal,,,,,j3+zYYlG8UKcDonvM90snA,f6S/tHa8pkCo7F7/GW25mg,,,N,0,0,,,2014-04-13 07:21,2014-04-14 16:04,admin,admin,
4245,144342,6971,40731,7842,0,N,N,N,CP_Phys,TT_Task,DT_FixedDrtn,TK_NotStart,CZA-TK-0521-3380,Inspection,8392,2412,0,60,0,98.712741,98.712741,60,0,0,0,,,,2015-04-11 15:00,2015-04-18 15:00,,2014-07-03 13:00,2014-07-10 13:00,2014-07-03 13:00,2014-07-10 13:00,2014-07-03 13:00,2014-07-10 13:00,2015-04-11 15:00,2015-04-18 15:00,,PT_Normal,,,,,dCSEBamcT0WXgznYrDwk5w,fzJUMRfdZU6prLVH26z7xQ,,,N,0,0,,,2014-04-13 07:21,2014-04-14 16:04,admin,admin,
4246,144343,6971,40732,7842,0,N,N,N,CP_Phys,TT_Task,DT_FixedDrtn,TK_NotStart,CZA-TK-0521-3390,Laying and Fit-up,8392,2412,0,10,0,0,0,10,0,0,0,,,,2015-04-18 15:00,2015-04-19 15:00,,2014-07-10 13:00,2014-07-12 13:00,2014-07-10 13:00,2014-07-12 13:00,2014-07-10 13:00,2014-07-12 13:00,2015-04-18 15:00,2015-04-19 15:00,,PT_Normal,,,,,7ZrmMxCunEOAmS9yEEI+WQ,L5kg1RXS+kGYXVtQEZoxZg,,,N,0,0,,,2014-04-13 07:21,2014-04-14 16:04,admin,admin,
4247,144344,6971,40732,7842,0,N,N,N,CP_Phys,TT_Task,DT_FixedDrtn,TK_NotStart,CZA-TK-0521-3400,Welding,8392,2412,0,30,0,0,0,30,90,0,90,,,,2015-04-19 15:00,2015-04-22 15:00,,2014-07-12 13:00,2014-07-15 13:00,2014-07-12 13:00,2014-07-15 13:00,2014-07-12 13:00,2014-07-15 13:00,2015-04-19 15:00,2015-04-22 15:00,,PT_Normal,,,,,49TOCiB/SEq0Q0p3TaMXmw,/1waOO4eAUqfQWnnGv6MOg,,,N,0,0,,,2014-04-13 07:21,2014-04-14 16:04,admin,admin,
4248,144345,6971,40732,7842,0,N,N,N,CP_Phys,TT_Task,DT_FixedDrtn,TK_NotStart,CZA-TK-0521-3410,Inspection,8392,2412,0,40,0,0,0,40,0,0,0,,,,2015-04-18 15:00,2015-04-22 15:00,,2014-07-10 13:00,2014-07-15 13:00,2014-07-10 13:00,2014-07-15 13:00,2014-07-10 13:00,2014-07-15 13:00,2015-04-18 15:00,2015-04-22 15:00,,PT_Normal,,,,,Vv57HoSVDECYV71yeCU3ag,O+Uv+IuGqkeEN5JdbEVzfA,,,N,0,0,,,2014-04-13 07:21,2014-04-14 16:04,admin,admin,
4249,144346,6971,40733,7842,0,N,N,N,CP_Phys,TT_Task,DT_FixedDrtn,TK_NotStart,CZA-TK-0521-3420,Installation and Fit-up,8392,2412,0,20,0,0,0,20,60,0,60,,,,2015-04-22 15:00,2015-04-25 15:00,,2014-07-15 13:00,2014-07-17 13:00,2014-07-15 13:00,2014-07-17 13:00,2014-07-15 13:00,2014-07-17 13:00,2015-04-22 15:00,2015-04-25 15:00,,PT_Normal,,,,,1SRNJnfQJky8fdoKSyjjqg,3EvoAA+Ms0+TWo7aIwET9g,,,N,0,0,,,2014-04-13 07:21,2014-04-14 16:04,admin,admin,
4250,144347,6971,40733,7842,0,N,N,N,CP_Phys,TT_Task,DT_FixedDrtn,TK_NotStart,CZA-TK-0521-3430,Welding,8392,2412,0,50,0,0,0,50,150,0,150,,,,2015-04-25 15:00,2015-04-30 15:00,,2014-07-17 13:00,2014-07-23 13:00,2014-07-17 13:00,2014-07-23 13:00,2014-07-17 13:00,2014-07-23 13:00,2015-04-25 15:00,2015-04-30 15:00,,PT_Normal,,,,,OU4haFj8uUm0Q4Pcx8ZeyA,dCAe89wEGUmmlleDyx7ZaA,,,N,0,0,,,2014-04-13 07:21,2014-04-14 16:04,admin,admin,
4251,144348,6971,40733,7842,0,N,N,N,CP_Phys,TT_Task,DT_FixedDrtn,TK_NotStart,CZA-TK-0521-3440,Inspection,8392,2412,0,70,0,0,0,70,0,0,0,,,,2015-04-22 15:00,2015-04-30 15:00,,2014-07-15 13:00,2014-07-23 13:00,2014-07-15 13:00,2014-07-23 13:00,2014-07-15 13:00,2014-07-23 13:00,2015-04-22 15:00,2015-04-30 15:00,,PT_Normal,,,,,osRn9UmWrk6VKxvu1n/OJQ,EEcvPYvRBkaDMygXR+C3Ww,,,N,0,0,,,2014-04-13 07:21,2014-04-14 16:04,admin,admin,
4252,144349,6971,40734,7842,0,N,N,N,CP_Phys,TT_Task,DT_FixedDrtn,TK_NotStart,CZA-TK-0521-3480,Erection and Fit-up,8392,2412,0,40,0,0,0,40,120,0,120,,,,2015-04-30 15:00,2015-05-05 15:00,,2014-07-23 13:00,2014-07-28 13:00,2014-07-23 13:00,2014-07-28 13:00,2014-07-23 13:00,2014-07-28 13:00,2015-04-30 15:00,2015-05-05 15:00,,PT_Normal,,,,,qbu2Qc0L4060kewfsPpCEQ,bts6gCBQmE+G3sc3D/6p9w,,,N,0,0,,,2014-04-13 07:21,2014-04-14 16:04,admin,admin,
4253,144350,6971,40734,7842,0,N,N,N,CP_Phys,TT_Task,DT_FixedDrtn,TK_NotStart,CZA-TK-0521-3490,Welding,8392,2412,0,100,0,0,0,100,300,0,300,,,,2015-05-05 15:00,2015-05-17 15:00,,2014-07-28 13:00,2014-08-09 13:00,2014-07-28 13:00,2014-08-09 13:00,2014-07-28 13:00,2014-08-09 13:00,2015-05-05 15:00,2015-05-17 15:00,,PT_Normal,,,,,sqgYRZtaJ0G7cquUJ8M4ag,rWTjLf3jlEaOGAyKyoTkXQ,,,N,0,0,,,2014-04-13 07:21,2014-04-14 16:04,admin,admin,
4254,144351,6971,40734,7842,0,N,N,N,CP_Phys,TT_Task,DT_FixedDrtn,TK_NotStart,CZA-TK-0521-3500,Inspection,8392,2412,0,140,0,0,0,140,0,0,0,,,,2015-04-30 15:00,2015-05-17 15:00,,2014-07-23 13:00,2014-08-09 13:00,2014-07-23 13:00,2014-08-09 13:00,2014-07-23 13:00,2014-08-09 13:00,2015-04-30 15:00,2015-05-17 15:00,,PT_Normal,,,,,uuRh9ZZWGUuSLXrQaeJ5eQ,AdcgB3MjXkaS5n5lah+s5Q,,,N,0,0,,,2014-04-13 07:21,2014-04-14 16:04,admin,admin,
4255,144352,6971,40735,7842,0,N,N,N,CP_Phys,TT_Task,DT_FixedDrtn,TK_NotStart,CZA-TK-0521-3450,Erection and Fit-up,8392,2412,0,40,0,0,0,40,120,0,120,,,,2015-05-17 15:00,2015-05-21 15:00,,2014-08-09 13:00,2014-08-13 13:00,2014-08-09 13:00,2014-08-13 13:00,2014-08-09 13:00,2014-08-13 13:00,2015-05-17 15:00,2015-05-21 15:00,,PT_Normal,,,,,r7riq1oIckaGhDFM5n6V3g,DtlT9TQnA0+XAGGUCQf9nA,,,N,0,0,,,2014-04-13 07:21,2014-04-14 16:04,admin,admin,
4256,144353,6971,40735,7842,0,N,N,N,CP_Phys,TT_Task,DT_FixedDrtn,TK_NotStart,CZA-TK-0521-3460,Welding,8392,2412,0,100,0,0,0,100,300,0,300,,,,2015-05-21 15:00,2015-06-02 15:00,,2014-08-13 13:00,2014-08-25 13:00,2014-08-13 13:00,2014-08-25 13:00,2014-08-13 13:00,2014-08-25 13:00,2015-05-21 15:00,2015-06-02 15:00,,PT_Normal,,,,,u9KoAnXWmUGJCtbtfs8rXw,9Ol0wzgK3kCla1GNdrhwAA,,,N,0,0,,,2014-04-13 07:21,2014-04-14 16:04,admin,admin,
4257,144354,6971,40735,7842,0,N,N,N,CP_Phys,TT_Task,DT_FixedDrtn,TK_NotStart,CZA-TK-0521-3470,Inspection,8392,2412,0,140,0,0,0,140,0,0,0,,,,2015-05-17 15:00,2015-06-02 15:00,,2014-08-09 13:00,2014-08-25 13:00,2014-08-09 13:00,2014-08-25 13:00,2014-08-09 13:00,2014-08-25 13:00,2015-05-17 15:00,2015-06-02 15:00,,PT_Normal,,,,,DzXoho0XYE2YBId/3mxSZA,m9Xrw0NRXk6EDJliIVDDUQ,,,N,0,0,,,2014-04-13 07:21,2014-04-14 16:04,admin,admin,
4258,144355,6971,40736,7842,0,N,N,N,CP_Phys,TT_Task,DT_FixedDrtn,TK_NotStart,CZA-TK-0521-3510,Installation of Primary and Secondary Seal,8392,2412,0,30,0,0,0,30,0,0,0,,,,2015-06-02 15:00,2015-06-06 15:00,,2014-08-25 13:00,2014-08-28 13:00,2014-08-25 13:00,2014-08-28 13:00,2014-08-25 13:00,2014-08-28 13:00,2015-06-02 15:00,2015-06-06 15:00,,PT_Normal,,,,,JiKqp299rEiyIIZBYevFxQ,FXIgHLiZ6k6Ndqh4oBEz0g,,,N,0,0,,,2014-04-13 07:21,2014-04-14 16:04,admin,admin,
4259,144356,6971,40736,7842,0,N,N,N,CP_Phys,TT_Task,DT_FixedDrtn,TK_NotStart,CZA-TK-0521-3520,Inspection,8392,2412,0,10,0,0,0,10,0,0,0,,,,2015-06-06 15:00,2015-06-07 15:00,,2014-08-28 13:00,2014-08-30 13:00,2014-08-28 13:00,2014-08-30 13:00,2014-08-28 13:00,2014-08-30 13:00,2015-06-06 15:00,2015-06-07 15:00,,PT_Normal,,,,,LXisIjNR80yBeN5ygUsbag,2NBlUPVKiE6x+WxIFk/aSA,,,N,0,0,,,2014-04-13 07:21,2014-04-14 16:04,admin,admin,
4260,144357,6971,40737,7842,0,N,N,N,CP_Phys,TT_Task,DT_FixedDrtn,TK_NotStart,CZA-TK-0521-2960,Laying and Fit-up,8392,2412,0,10,0,31.393311,31.393311,10,30,0,30,,,,2015-01-17 15:00,2015-01-18 15:00,,2014-04-10 13:00,2014-04-12 13:00,2014-04-10 13:00,2014-04-12 13:00,2014-04-10 13:00,2014-04-12 13:00,2015-01-17 15:00,2015-01-18 15:00,,PT_Normal,,,,,/JEPj3ZXOkm4Z+UYycY1aQ,VYw94mSnD0exUkJyONNkHw,,,N,0,0,,,2014-04-13 07:21,2014-04-14 16:04,admin,admin,
4261,144358,6971,40737,7842,0,N,N,N,CP_Phys,TT_Task,DT_FixedDrtn,TK_NotStart,CZA-TK-0521-2970,Welding,8392,2412,0,30,0,39.241639,39.241639,30,90,0,90,,,,2015-01-18 15:00,2015-01-21 15:00,,2014-04-12 13:00,2014-04-15 13:00,2014-04-12 13:00,2014-04-15 13:00,2014-04-12 13:00,2014-04-15 13:00,2015-01-18 15:00,2015-01-21 15:00,,PT_Normal,,,,,lM3BNpC4ikya7CxOPSsISA,JCLonKJo60Cx5vVMPwTqfg,,,N,0,0,,,2014-04-13 07:21,2014-04-14 16:04,admin,admin,
4262,144359,6971,40737,7842,0,N,N,N,CP_Phys,TT_Task,DT_FixedDrtn,TK_NotStart,CZA-TK-0521-2980,Inspection,8392,2412,0,40,0,7.848328,7.848328,40,0,0,0,,,,2015-01-17 15:00,2015-01-21 15:00,,2014-04-10 13:00,2014-04-15 13:00,2014-04-10 13:00,2014-04-15 13:00,2014-04-10 13:00,2014-04-15 13:00,2015-01-17 15:00,2015-01-21 15:00,,PT_Normal,,,,,pKgZ2lMuv0WkwNVk9befuQ,oHmUFSSEBU+gIS3i0bB6Dw,,,N,0,0,,,2014-04-13 07:21,2014-04-14 16:04,admin,admin,
4263,144360,6971,40738,7842,0,N,N,N,CP_Phys,TT_Task,DT_FixedDrtn,TK_NotStart,CZA-TK-0521-2990,Erection and Fit-up,8392,2412,0,10,0,90.833321,90.833321,10,30,0,30,,,,2015-01-21 15:00,2015-01-22 15:00,,2014-04-15 13:00,2014-04-16 13:00,2014-04-15 13:00,2014-04-16 13:00,2014-04-15 13:00,2014-04-16 13:00,2015-01-21 15:00,2015-01-22 15:00,,PT_Normal,,,,,At/SaEH73k636Z+9MexKcA,KGnErY3OSUyGdlaqyCZq4g,,,N,0,0,,,2014-04-13 07:21,2014-04-14 16:04,admin,admin,
4264,144361,6971,40738,7842,0,N,N,N,CP_Phys,TT_Task,DT_FixedDrtn,TK_NotStart,CZA-TK-0521-3000,Welding,8392,2412,0,40,0,113.541651,113.541651,40,120,0,120,,,,2015-01-22 15:00,2015-01-27 15:00,,2014-04-16 13:00,2014-04-21 13:00,2014-04-16 13:00,2014-04-21 13:00,2014-04-16 13:00,2014-04-21 13:00,2015-01-22 15:00,2015-01-27 15:00,,PT_Normal,,,,,sK7wei3ow0acCoQAbqHQjQ,uv+ebJY2gk+r1EDFhmP5yQ,,,N,0,0,,,2014-04-13 07:21,2014-04-14 16:04,admin,admin,
4265,144362,6971,40738,7842,0,N,N,N,CP_Phys,TT_Task,DT_FixedDrtn,TK_NotStart,CZA-TK-0521-3010,Inspection,8392,2412,0,50,0,22.70833,22.70833,50,0,0,0,,,,2015-01-21 15:00,2015-01-27 15:00,,2014-04-15 13:00,2014-04-21 13:00,2014-04-15 13:00,2014-04-21 13:00,2014-04-15 13:00,2014-04-21 13:00,2015-01-21 15:00,2015-01-27 15:00,,PT_Normal,,,,,4S+dNaTf5029x7awIfWT7g,QzRj04de/k2M+nZgf/p0/Q,,,N,0,0,,,2014-04-13 07:21,2014-04-14 16:04,admin,admin,
4266,144363,6971,40739,7842,0,N,N,N,CP_Phys,TT_Task,DT_FixedDrtn,TK_NotStart,CZA-TK-0521-3020,Erection and Fit-up,8392,2412,0,10,0,162.115707,162.115707,10,30,0,30,,,,2015-01-27 15:00,2015-01-28 15:00,,2014-04-21 13:00,2014-04-22 13:00,2014-04-21 13:00,2014-04-22 13:00,2014-04-21 13:00,2014-04-22 13:00,2015-01-27 15:00,2015-01-28 15:00,,PT_Normal,,,,,CYdlgU/i3ESXpNxW3Y2ERw,ghgkGgHm9UCTg0MYZcZYnw,,,N,0,0,,,2014-04-13 07:21,2014-04-14 16:04,admin,admin,
4267,144364,6971,40739,7842,0,N,N,N,CP_Phys,TT_Task,DT_FixedDrtn,TK_NotStart,CZA-TK-0521-3030,Welding,8392,2412,0,30,0,202.644634,202.644634,30,90,0,90,,,,2015-01-28 15:00,2015-02-01 15:00,,2014-04-22 13:00,2014-04-26 13:00,2014-04-22 13:00,2014-04-26 13:00,2014-04-22 13:00,2014-04-26 13:00,2015-01-28 15:00,2015-02-01 15:00,,PT_Normal,,,,,mEAK9OEGckKc1XLb93OBiw,a/5T8/5KTEO/FkF+9hq++w,,,N,0,0,,,2014-04-13 07:21,2014-04-14 16:04,admin,admin,
4268,144365,6971,40739,7842,0,N,N,N,CP_Phys,TT_Task,DT_FixedDrtn,TK_NotStart,CZA-TK-0521-3040,Inspection,8392,2412,0,40,0,40.528927,40.528927,40,0,0,0,,,,2015-01-27 15:00,2015-02-01 15:00,,2014-04-21 13:00,2014-04-26 13:00,2014-04-21 13:00,2014-04-26 13:00,2014-04-21 13:00,2014-04-26 13:00,2015-01-27 15:00,2015-02-01 15:00,,PT_Normal,,,,,DTIkpjNnLE6DDqFQuwXzHw,sl454eOr80iyymonpi6ZbA,,,N,0,0,,,2014-04-13 07:21,2014-04-14 16:04,admin,admin,
4269,144366,6971,39945,7842,0,N,N,N,CP_Phys,TT_Task,DT_FixedDrtn,TK_NotStart,CZA-TK-0521-2580,Cutting of Annular Plate,8497,2922,0,10,0,71.7111,71.7111,10,0,0,0,,,,2015-01-15 09:00,2015-01-17 09:00,,2014-02-09 07:00,2014-02-09 17:00,2014-02-09 07:00,2014-02-09 17:00,2014-02-09 07:00,2014-02-09 17:00,2015-01-15 09:00,2015-01-17 09:00,,PT_Normal,,,,,sP5t7GCyj0q4SrD7YND6MA,EA6gHDa4qU2tDBqhZHNgEw,,,N,0,0,,,2014-04-13 07:21,2014-04-14 17:03,admin,admin,
4270,144367,6971,39945,7842,0,N,N,N,CP_Phys,TT_Task,DT_FixedDrtn,TK_NotStart,CZA-TK-0521-2590,Cutting of Bottom Plates,8497,3485.5,0,10,0,207.4887,207.4887,10,0,0,0,,,,2015-03-23 12:30,2015-03-24 12:30,,2014-02-10 07:00,2014-02-10 17:00,2014-02-10 07:00,2014-02-10 17:00,2014-02-10 07:00,2014-02-10 17:00,2015-03-23 12:30,2015-03-24 12:30,,PT_Normal,,,,,hfp2nX3DSEKM/JfETl+k9g,v4DADNG/BUWyQ9UU1ZkeBg,,,N,0,0,,,2014-04-13 07:21,2014-04-14 17:03,admin,admin,
4271,144368,6971,39945,7842,0,N,N,N,CP_Phys,TT_Task,DT_FixedDrtn,TK_NotStart,CZA-TK-0521-2600,"Cutting, Bevelling & Rolling of Shell No.1",8497,3485.5,0,10,0,370.3176,370.3176,10,0,0,0,,,,2015-03-24 12:30,2015-03-25 12:30,,2014-02-11 07:00,2014-02-11 17:00,2014-02-11 07:00,2014-02-11 17:00,2014-02-11 07:00,2014-02-11 17:00,2015-03-24 12:30,2015-03-25 12:30,,PT_Normal,,,,,F/wG3ht+V0er2iLA1BlTjA,lbHiS9z5NkSC2YgL8IPQlw,,,N,0,0,,,2014-04-13 07:21,2014-04-14 17:03,admin,admin,
4272,144369,6971,39945,7842,0,N,N,N,CP_Phys,TT_Task,DT_FixedDrtn,TK_NotStart,CZA-TK-0521-2610,"Cutting, Bevelling & Rolling of Shell No.2",8497,3485.5,0,10,0,42.7428,42.7428,10,0,0,0,,,,2015-03-24 12:30,2015-03-25 12:30,,2014-02-11 07:00,2014-02-11 17:00,2014-02-11 07:00,2014-02-11 17:00,2014-02-11 07:00,2014-02-11 17:00,2015-03-24 12:30,2015-03-25 12:30,,PT_Normal,,,,,flMBg5Cg10yKqItjcS+PTQ,6nQ+8GlBEUCR1jKFviAj3A,,,N,0,0,,,2014-04-13 07:21,2014-04-14 17:03,admin,admin,
4273,144370,6971,39945,7842,0,N,N,N,CP_Phys,TT_Task,DT_FixedDrtn,TK_NotStart,CZA-TK-0521-2620,"Cutting, Fit-up and Welding of Shell Nozzles,Manholes and Other Appurtanances",8497,3485.5,0,50,0,0,0,50,0,0,0,,,,2015-03-24 12:30,2015-03-30 12:30,,2014-02-11 07:00,2014-02-16 17:00,2014-02-11 07:00,2014-02-16 17:00,2014-02-11 07:00,2014-02-16 17:00,2015-03-24 12:30,2015-03-30 12:30,,PT_Normal,,,,,sA6mhq9wJUifGIBY1WYPGg,BKhiq8XpaEmxZwicgBlUXA,,,N,0,0,,,2014-04-13 07:21,2014-04-14 17:03,admin,admin,
4274,144371,6971,39945,7842,0,N,N,N,CP_Phys,TT_Task,DT_FixedDrtn,TK_NotStart,CZA-TK-0521-2630,Cutting of Floating Deck Plate,8497,3485.5,0,10,0,479.67,479.67,10,0,0,0,,,,2015-03-30 12:30,2015-03-31 12:30,,2014-02-17 07:00,2014-02-17 17:00,2014-02-17 07:00,2014-02-17 17:00,2014-02-17 07:00,2014-02-17 17:00,2015-03-30 12:30,2015-03-31 12:30,,PT_Normal,,,,,LfFEYu4ma0q/t0EXAIfGmA,N8800kyGuEmujdtX1CKy2A,,,N,0,0,,,2014-04-13 07:21,2014-04-14 17:03,admin,admin,
4275,144372,6971,39945,7842,0,N,N,N,CP_Phys,TT_Task,DT_FixedDrtn,TK_NotStart,CZA-TK-0521-2640,"Cutting,Fit up and Welding of Pontoon",8497,3485.5,0,10,0,48.9,48.9,10,0,0,0,,,,2015-03-31 12:30,2015-04-01 12:30,,2014-02-18 07:00,2014-02-18 17:00,2014-02-18 07:00,2014-02-18 17:00,2014-02-18 07:00,2014-02-18 17:00,2015-03-31 12:30,2015-04-01 12:30,,PT_Normal,,,,,mQUhQD6sOkGxZqJzaLh/Nw,30NxHhWR4UuAnJQoAFF0SA,,,N,0,0,,,2014-04-13 07:21,2014-04-14 17:03,admin,admin,
4276,144373,6971,39945,7842,0,N,N,N,CP_Phys,TT_Task,DT_FixedDrtn,TK_NotStart,CZA-TK-0521-2650,Cutting of Floating Legs and Manholes,8497,3485.5,0,10,0,0,0,10,0,0,0,,,,2015-04-01 12:30,2015-04-02 12:30,,2014-02-19 07:00,2014-02-19 17:00,2014-02-19 07:00,2014-02-19 17:00,2014-02-19 07:00,2014-02-19 17:00,2015-04-01 12:30,2015-04-02 12:30,,PT_Normal,,,,,NjNuFHZXWUCSSlmdfVyBUQ,qM3cAJnKsEih23b1KczXVg,,,N,0,0,,,2014-04-13 07:21,2014-04-14 17:03,admin,admin,
4277,144374,6971,39945,7842,0,N,N,N,CP_Phys,TT_Task,DT_FixedDrtn,TK_NotStart,CZA-TK-0521-2660,"Cutting, Bevelling & Rolling of Shell No.3",8497,3485.5,0,10,0,0,0,10,0,0,0,,,,2015-04-02 12:30,2015-04-04 12:30,,2014-02-20 07:00,2014-02-20 17:00,2014-02-20 07:00,2014-02-20 17:00,2014-02-20 07:00,2014-02-20 17:00,2015-04-02 12:30,2015-04-04 12:30,,PT_Normal,,,,,pv5d9ycFUkaPnk5qEYHiMg,8U3xfebakUSeUZVWuM8CeQ,,,N,0,0,,,2014-04-13 07:21,2014-04-14 17:03,admin,admin,
4278,144375,6971,39945,7842,0,N,N,N,CP_Phys,TT_Task,DT_FixedDrtn,TK_NotStart,CZA-TK-0521-2670,"Cutting, Bevelling & Rolling of Shell No.4",8497,3485.5,0,10,0,0,0,10,0,0,0,,,,2015-04-02 12:30,2015-04-04 12:30,,2014-02-20 07:00,2014-02-20 17:00,2014-02-20 07:00,2014-02-20 17:00,2014-02-20 07:00,2014-02-20 17:00,2015-04-02 12:30,2015-04-04 12:30,,PT_Normal,,,,,IRxP88fsi0OCU8xreSD0IA,xDFv99AO1kuiZSKkpeBlqg,,,N,0,0,,,2014-04-13 07:21,2014-04-14 17:03,admin,admin,
4279,144376,6971,39945,7842,0,N,N,N,CP_Phys,TT_Task,DT_FixedDrtn,TK_NotStart,CZA-TK-0521-2680,"Cutting, Bevelling & Rolling of Shell No.5",8497,3485.5,0,10,0,370.3176,370.3176,10,0,0,0,,,,2015-04-04 12:30,2015-04-05 12:30,,2014-02-22 07:00,2014-02-22 17:00,2014-02-22 07:00,2014-02-22 17:00,2014-02-22 07:00,2014-02-22 17:00,2015-04-04 12:30,2015-04-05 12:30,,PT_Normal,,,,,ZIfaCC3kdEiLkcnKuOq8zQ,NdeqkJHSw02/GCrkExXhDg,,,N,0,0,,,2014-04-13 07:21,2014-04-14 17:03,admin,admin,
4280,144377,6971,39945,7842,0,N,N,N,CP_Phys,TT_Task,DT_FixedDrtn,TK_NotStart,CZA-TK-0521-2690,"Cutting, Bevelling & Rolling of Shell No.6",8497,3485.5,0,12.5,0,105.5217,105.5217,12.5,0,0,0,,,,2015-04-05 12:30,2015-04-06 15:00,,2014-02-23 07:00,2014-02-24 09:30,2014-02-23 07:00,2014-02-24 09:30,2014-02-23 07:00,2014-02-24 09:30,2015-04-05 12:30,2015-04-06 15:00,,PT_Normal,,,,,Wuf64HRJAECD7WqHaXpM4A,xcLs6YC9KUC+40/fMlI5HA,,,N,0,0,,,2014-04-13 07:21,2014-04-14 17:03,admin,admin,
4281,144378,6971,39945,7842,0,N,N,N,CP_Phys,TT_Task,DT_FixedDrtn,TK_NotStart,CZA-TK-0521-2700,"Cutting, Bevelling & Rolling of Curb Angle",8497,3485.5,0,20,0,8.4999,8.4999,20,0,0,0,,,,2015-04-06 15:00,2015-04-08 15:00,,2014-02-24 09:30,2014-02-26 09:30,2014-02-24 09:30,2014-02-26 09:30,2014-02-24 09:30,2014-02-26 09:30,2015-04-06 15:00,2015-04-08 15:00,,PT_Normal,,,,,5mwhvrHT7Ui34Iy8iHoilA,oOmwiY9lqUq84055Sn6Mtw,,,N,0,0,,,2014-04-13 07:21,2014-04-14 17:03,admin,admin,
4282,144379,6971,39945,7842,0,N,N,N,CP_Phys,TT_Task,DT_FixedDrtn,TK_NotStart,CZA-TK-0521-2710,"Cutting, Fit-up and Welding of Roof Structure",8497,3485.5,0,40,0,180.39,180.39,40,0,0,0,,,,2015-04-09 09:00,2015-04-14 09:00,,2014-02-26 13:30,2014-03-03 13:30,2014-02-26 13:30,2014-03-03 13:30,2014-02-26 13:30,2014-03-03 13:30,2015-04-09 09:00,2015-04-14 09:00,,PT_Normal,,,,,RnZHsDXbvEWv98syuxXvYA,8KT6hlK2DESM0BbbgoukCg,,,N,0,0,,,2014-04-13 07:21,2014-04-14 17:03,admin,admin,
4283,144380,6971,39945,7842,0,N,N,N,CP_Phys,TT_Task,DT_FixedDrtn,TK_NotStart,CZA-TK-0521-2920,Cutting of Roof Plates,8497,3485.5,0,20,0,0,0,20,0,0,0,,,,2015-04-14 09:00,2015-04-16 09:00,,2014-03-03 13:30,2014-03-05 13:30,2014-03-03 13:30,2014-03-05 13:30,2014-03-03 13:30,2014-03-05 13:30,2015-04-14 09:00,2015-04-16 09:00,,PT_Normal,,,,,9vhUwZwqaE+qZ+oNdsx/5w,6RI8Xwr+KEuaj+5Id1tWvg,,,N,0,0,,,2014-04-13 07:21,2014-04-14 17:03,admin,admin,
4284,144381,6971,39945,7842,0,N,N,N,CP_Phys,TT_Task,DT_FixedDrtn,TK_NotStart,CZA-TK-0521-2930,"Cutting, Fit-up and Welding of Roof Nozzles, Manholes and Other Appurtanances",8497,3485.5,0,50,0,0,0,50,0,0,0,,,,2015-04-16 09:00,2015-04-22 09:00,,2014-03-05 13:30,2014-03-11 13:30,2014-03-05 13:30,2014-03-11 13:30,2014-03-05 13:30,2014-03-11 13:30,2015-04-16 09:00,2015-04-22 09:00,,PT_Normal,,,,,uhRL98yFWEKGLLpIq1ST0g,s6DFeWq9UEiqpwG1/JnCXg,,,N,0,0,,,2014-04-13 07:21,2014-04-14 17:03,admin,admin,
4285,144382,6971,39945,7842,0,N,N,N,CP_Phys,TT_Task,DT_FixedDrtn,TK_NotStart,CZA-TK-0521-2940,"Cutting, Fit-up and Welding of Roof Platform,Gratings and Stairway",8497,3485.5,0,70,0,0,0,70,0,0,0,,,,2015-04-20 11:00,2015-04-28 11:00,,2014-03-09 15:30,2014-03-17 15:30,2014-03-09 15:30,2014-03-17 15:30,2014-03-09 15:30,2014-03-17 15:30,2015-04-20 11:00,2015-04-28 11:00,,PT_Normal,,,,,pWd7WimAV0CnIVRyU93JdQ,OD42nWl44Ui2QPUVJ9oXvA,,,N,0,0,,,2014-04-13 07:21,2014-04-14 17:03,admin,admin,
4286,144383,6971,39945,7842,0,N,N,N,CP_Phys,TT_Task,DT_FixedDrtn,TK_NotStart,CZA-TK-0521-2950,"Cutting, Fit-up and Welding of Stairway Platform, Gratings and Handrails",8497,3485.5,1073.5,70,0,0,0,70,0,0,0,,,,2015-04-22 15:00,2015-04-30 15:00,,2014-03-12 09:30,2014-03-20 09:30,2014-03-12 09:30,2014-03-20 09:30,2014-03-12 09:30,2014-03-20 09:30,2015-04-22 15:00,2015-04-30 15:00,,PT_Normal,,,,,Bc49JV1jCEWpbgRJyXSMXw,Fskrcl/+ykOKtN0kGiz3VA,,,N,0,0,,,2014-04-13 07:21,2014-04-14 17:03,admin,admin,
4287,144384,6971,40014,7842,0,N,N,N,CP_Phys,TT_Task,DT_FixedDrtn,TK_NotStart,CZA-TK-0521-3530,"Filling, Holding and Draining of Water",8392,2412,0,50,0,1751.64635,1751.64635,50,0,0,0,,,,2015-06-07 15:00,2015-06-13 15:00,,2014-08-30 13:00,2014-09-04 13:00,2014-08-30 13:00,2014-09-04 13:00,2014-08-30 13:00,2014-09-04 13:00,2015-06-07 15:00,2015-06-13 15:00,,PT_Normal,,,,,Gx7ORvHfjk2xvgzx2Yuz3g,NhSAmY2Hq0G4ZNdmbPdK3w,,,N,0,0,,,2014-04-13 07:21,2014-04-14 16:04,admin,admin,
4288,144385,6971,40015,7842,0,N,N,N,CP_Phys,TT_Task,DT_FixedDrtn,TK_NotStart,CZA-TK-0521-3540,"Blasting and Painting of Bottom, Shell and Roof (Inside and Outside)",8392,2412,0,60,0,1050.98781,1050.98781,60,0,0,0,,,,2015-06-13 15:00,2015-06-20 15:00,,2014-09-04 13:00,2014-09-11 13:00,2014-09-04 13:00,2014-09-11 13:00,2014-09-04 13:00,2014-09-11 13:00,2015-06-13 15:00,2015-06-20 15:00,,PT_Normal,,,,,xQWExXvKRUqKiazxPDqnLg,4h/BcFFvjEO80WSE3T1Lpg,,,N,0,0,,,2014-04-13 07:21,2014-04-14 16:04,admin,admin,
4289,144386,6971,40016,7842,0,N,N,N,CP_Phys,TT_Task,DT_FixedDrtn,TK_NotStart,CZA-TK-0521-3550,Tank Calibration,8392,2412,0,50,0,350.32927,350.32927,50,0,0,0,,,,2015-06-20 15:00,2015-06-25 15:00,,2014-09-11 13:00,2014-09-17 13:00,2014-09-11 13:00,2014-09-17 13:00,2014-09-11 13:00,2014-09-17 13:00,2015-06-20 15:00,2015-06-25 15:00,,PT_Normal,,,,,p4Ovm67IhU+WY9NfPX4Bhw,0IUkfyXyU0aK2Y2Lgl1BJA,,,N,0,0,,,2014-04-13 07:21,2014-04-14 16:04,admin,admin,
4290,144387,6971,40016,7842,0,N,N,N,CP_Phys,TT_Task,DT_FixedDrtn,TK_NotStart,CZA-TK-0521-3560,Tank Handover,8392,2412,2412,20,0,350.32927,350.32927,20,0,0,0,,,,2015-06-25 15:00,2015-06-28 15:00,,2014-09-17 13:00,2014-09-20 13:00,2014-09-17 13:00,2014-09-20 13:00,2014-09-17 13:00,2014-09-20 13:00,2015-06-25 15:00,2015-06-28 15:00,,PT_Normal,,,,,ltSKtZYOJ0GV2KGdTyM78g,0UJoMHEn30yvNE/prKogCg,,,N,0,0,,,2014-04-13 07:21,2014-04-14 16:04,admin,admin,
4291,144388,6971,40000,7842,0,N,N,N,CP_Phys,TT_Task,DT_FixedDrtn,TK_NotStart,CZA-TK-0506-2410,Tank Calibration,8390,2478,0,50,0,293.199661,293.199661,50,0,0,0,,,,2015-06-20 15:00,2015-06-25 15:00,,2014-09-04 07:00,2014-09-09 17:00,2014-09-04 07:00,2014-09-09 17:00,2014-09-04 07:00,2014-09-09 17:00,2015-06-20 15:00,2015-06-25 15:00,,PT_Normal,,,,,Wojgws670k+60jnLDhAdLA,MWK9rZM0E0SbxEY7r+IZ7A,,,N,0,0,,,2014-04-13 07:21,2014-04-14 16:04,admin,admin,
4292,144389,6971,40000,7842,0,N,N,N,CP_Phys,TT_Task,DT_FixedDrtn,TK_NotStart,CZA-TK-0506-2420,Tank Handover,8390,2478,2478,20,0,293.199661,293.199661,20,0,0,0,,,,2015-06-25 15:00,2015-06-28 15:00,,2014-09-10 07:00,2014-09-11 17:00,2014-09-10 07:00,2014-09-11 17:00,2014-09-10 07:00,2014-09-11 17:00,2015-06-25 15:00,2015-06-28 15:00,,PT_Normal,,,,,uOfoxy3DQkOxlmwf94Lijw,tO8yy4FUG0Gxb2jGhW0ljA,,,N,0,0,,,2014-04-13 07:21,2014-04-14 16:04,admin,admin,
4293,144390,6971,40110,7842,0,N,N,N,CP_Phys,TT_Task,DT_FixedDrtn,TK_NotStart,CZA-TK-0506-2390,"Filling, Holding and Draining of Water",8390,2468,0,90,0,1465.998304,1465.998304,90,0,0,0,,,,2015-05-28 15:00,2015-06-08 15:00,,2014-08-14 07:00,2014-08-24 17:00,2014-08-14 07:00,2014-08-24 17:00,2014-08-14 07:00,2014-08-24 17:00,2015-05-28 15:00,2015-06-08 15:00,,PT_Normal,,,,,embK9LoHyE6kVhUkJNFfsA,Eqc6v/aqbECaJ9U0Z08CHQ,,,N,0,0,,,2014-04-13 07:21,2014-04-14 16:04,admin,admin,
4294,144391,6971,40748,7842,0,N,N,N,CP_Phys,TT_Task,DT_FixedDrtn,TK_NotStart,CZA-TK-0506-1870,Laying and Fit-up,8390,2468,0,10,0,73.966427,73.966427,10,20,0,20,,,,2015-01-27 15:00,2015-01-28 15:00,,2014-04-15 07:00,2014-04-15 17:00,2014-04-15 07:00,2014-04-15 17:00,2014-04-15 07:00,2014-04-15 17:00,2015-01-27 15:00,2015-01-28 15:00,,PT_Normal,,,,,Pg7W89nRlkuya8QUMEzaNQ,uI/h07fKUEOGXd1u3s1y8g,,,N,0,0,,,2014-04-13 07:21,2014-04-14 16:04,admin,admin,
4295,144392,6971,40748,7842,0,N,N,N,CP_Phys,TT_Task,DT_FixedDrtn,TK_NotStart,CZA-TK-0506-1880,Welding,8390,2468,0,30,0,92.458034,92.458034,30,60,0,60,,,,2015-01-28 15:00,2015-02-01 15:00,,2014-04-16 07:00,2014-04-19 17:00,2014-04-16 07:00,2014-04-19 17:00,2014-04-16 07:00,2014-04-19 17:00,2015-01-28 15:00,2015-02-01 15:00,,PT_Normal,,,,,iMFQbYlAkUmSz56mZgbBuw,Uxi3ywbQ60KNAWNMgKMqvw,,,N,0,0,,,2014-04-13 07:21,2014-04-14 16:04,admin,admin,
4296,144393,6971,40748,7842,0,N,N,N,CP_Phys,TT_Task,DT_FixedDrtn,TK_NotStart,CZA-TK-0506-1890,Inspection,8390,2468,0,40,0,18.491607,18.491607,40,0,0,0,,,,2015-01-27 15:00,2015-02-01 15:00,,2014-04-15 07:00,2014-04-19 17:00,2014-04-15 07:00,2014-04-19 17:00,2014-04-15 07:00,2014-04-19 17:00,2015-01-27 15:00,2015-02-01 15:00,,PT_Normal,,,,,NeLz7CDpikmqHabZNynXEw,GWq6uvQv3USWwiPicQVrPw,,,N,0,0,,,2014-04-13 07:21,2014-04-14 16:04,admin,admin,
4297,144394,6971,40749,7842,0,N,N,N,CP_Phys,TT_Task,DT_FixedDrtn,TK_NotStart,CZA-TK-0506-1900,Erection and Fit-up,8390,2468,0,10,0,114.876481,114.876481,10,20,0,20,,,,2015-02-01 15:00,2015-02-02 15:00,,2014-04-20 07:00,2014-04-20 17:00,2014-04-20 07:00,2014-04-20 17:00,2014-04-20 07:00,2014-04-20 17:00,2015-02-01 15:00,2015-02-02 15:00,,PT_Normal,,,,,XpYQuUmWkU2D6ae/6xzYxQ,8MqHKtSctU+V9YWcrlZGww,,,N,0,0,,,2014-04-13 07:21,2014-04-14 16:04,admin,admin,
4298,144395,6971,40749,7842,0,N,N,N,CP_Phys,TT_Task,DT_FixedDrtn,TK_NotStart,CZA-TK-0506-1910,Welding,8390,2468,0,30,0,143.595601,143.595601,30,90,0,90,,,,2015-02-02 15:00,2015-02-05 15:00,,2014-04-21 07:00,2014-04-23 17:00,2014-04-21 07:00,2014-04-23 17:00,2014-04-21 07:00,2014-04-23 17:00,2015-02-02 15:00,2015-02-05 15:00,,PT_Normal,,,,,p/HzCbgNI0WyKwVYAnFXJw,lR0jbWL9GEyoKDdykZuaZg,,,N,0,0,,,2014-04-13 07:21,2014-04-14 16:04,admin,admin,
4299,144396,6971,40749,7842,0,N,N,N,CP_Phys,TT_Task,DT_FixedDrtn,TK_NotStart,CZA-TK-0506-1920,Inspection,8390,2468,0,40,0,28.71912,28.71912,40,0,0,0,,,,2015-02-01 15:00,2015-02-05 15:00,,2014-04-20 07:00,2014-04-23 17:00,2014-04-20 07:00,2014-04-23 17:00,2014-04-20 07:00,2014-04-23 17:00,2015-02-01 15:00,2015-02-05 15:00,,PT_Normal,,,,,pZvlHTYEQE6WzjO9FbiRVw,KfprM0VQp0eZje0BX+ILhg,,,N,0,0,,,2014-04-13 07:21,2014-04-14 16:04,admin,admin,
4300,144397,6971,40750,7842,0,N,N,N,CP_Phys,TT_Task,DT_FixedDrtn,TK_NotStart,CZA-TK-0506-1940,Welding,8390,2468,0,40,0,148.084544,148.084544,40,80,0,80,,,,2015-02-07 15:00,2015-02-11 15:00,,2014-04-26 07:00,2014-04-29 17:00,2014-04-26 07:00,2014-04-29 17:00,2014-04-26 07:00,2014-04-29 17:00,2015-02-07 15:00,2015-02-11 15:00,,PT_Normal,,,,,Lr88tkPRSk60VjJatxPh9Q,X4us3xaVL0adevyCHfphFQ,,,N,0,0,,,2014-04-13 07:21,2014-04-14 16:04,admin,admin,
4301,144398,6971,40750,7842,0,N,N,N,CP_Phys,TT_Task,DT_FixedDrtn,TK_NotStart,CZA-TK-0506-1950,Inspection,8390,2468,0,50,0,29.616909,29.616909,50,0,0,0,,,,2015-02-05 15:00,2015-02-11 15:00,,2014-04-24 07:00,2014-04-29 17:00,2014-04-24 07:00,2014-04-29 17:00,2014-04-24 07:00,2014-04-29 17:00,2015-02-05 15:00,2015-02-11 15:00,,PT_Normal,,,,,2hrIGIng10KoNt6IJaOXIw,tKCvF8I/6USmOqityChaxw,,,N,0,0,,,2014-04-13 07:21,2014-04-14 16:04,admin,admin,
4302,144399,6971,40750,7842,0,N,N,N,CP_Phys,TT_Task,DT_FixedDrtn,TK_NotStart,CZA-TK-0506-1930,Erection and Fit-up,8390,2468,0,10,0,118.467635,118.467635,10,20,0,20,,,,2015-02-05 15:00,2015-02-07 15:00,,2014-04-24 07:00,2014-04-24 17:00,2014-04-24 07:00,2014-04-24 17:00,2014-04-24 07:00,2014-04-24 17:00,2015-02-05 15:00,2015-02-07 15:00,,PT_Normal,,,,,YriC/FE4UUa6xSp0WI0+Ww,OkYyz5P3YEiL9PWn0VHMeA,,,N,0,0,,,2014-04-13 07:21,2014-04-14 16:04,admin,admin,
4303,144400,6971,40751,7842,0,N,N,N,CP_Phys,TT_Task,DT_FixedDrtn,TK_NotStart,CZA-TK-0506-1960,Erection and Fit-up,8390,2468,0,10,0,105.325986,105.325986,10,20,0,20,,,,2015-02-11 15:00,2015-02-12 15:00,,2014-04-30 07:00,2014-04-30 17:00,2014-04-30 07:00,2014-04-30 17:00,2014-04-30 07:00,2014-04-30 17:00,2015-02-11 15:00,2015-02-12 15:00,,PT_Normal,,,,,G0lntaRy2Uax92896wZmGA,q1aNh2RUikeavLwgTxD+6A,,,N,0,0,,,2014-04-13 07:21,2014-04-14 16:04,admin,admin,
4304,144401,6971,40751,7842,0,N,N,N,CP_Phys,TT_Task,DT_FixedDrtn,TK_NotStart,CZA-TK-0506-1970,Welding,8390,2468,0,40,0,131.657483,131.657483,40,80,0,80,,,,2015-02-12 15:00,2015-02-17 15:00,,2014-05-01 07:00,2014-05-05 17:00,2014-05-01 07:00,2014-05-05 17:00,2014-05-01 07:00,2014-05-05 17:00,2015-02-12 15:00,2015-02-17 15:00,,PT_Normal,,,,,WxxJuIVEOkCYFi6uy6AOyg,hWkpRGTITEOvpRmVU3RSgw,,,N,0,0,,,2014-04-13 07:21,2014-04-14 16:04,admin,admin,
4305,144402,6971,40751,7842,0,N,N,N,CP_Phys,TT_Task,DT_FixedDrtn,TK_NotStart,CZA-TK-0506-1980,Inspection,8390,2468,0,50,0,26.331497,26.331497,50,0,0,0,,,,2015-02-11 15:00,2015-02-17 15:00,,2014-04-30 07:00,2014-05-05 17:00,2014-04-30 07:00,2014-05-05 17:00,2014-04-30 07:00,2014-05-05 17:00,2015-02-11 15:00,2015-02-17 15:00,,PT_Normal,,,,,VS3OHC4d3UmdnCURGNEp+Q,J0HostK4oEugWRuqVtBdQQ,,,N,0,0,,,2014-04-13 07:21,2014-04-14 16:04,admin,admin,
4306,144403,6971,40752,7842,0,N,N,N,CP_Phys,TT_Task,DT_FixedDrtn,TK_NotStart,CZA-TK-0506-1990,"Cutting, Installation and Fit-up",8390,2468,0,20,0,0,0,20,40,0,40,,,,2015-02-17 15:00,2015-02-19 15:00,,2014-05-06 07:00,2014-05-07 17:00,2014-05-06 07:00,2014-05-07 17:00,2014-05-06 07:00,2014-05-07 17:00,2015-02-17 15:00,2015-02-19 15:00,,PT_Normal,,,,,pYLcsLNWIkuTI+i7mXtb9A,NmrTVTzBika8mAJEHI4i/w,,,N,0,0,,,2014-04-13 07:21,2014-04-14 16:04,admin,admin,
4307,144404,6971,40752,7842,0,N,N,N,CP_Phys,TT_Task,DT_FixedDrtn,TK_NotStart,CZA-TK-0506-2000,Welding,8390,2468,0,20,0,0,0,20,40,0,40,,,,2015-02-19 15:00,2015-02-22 15:00,,2014-05-08 07:00,2014-05-10 17:00,2014-05-08 07:00,2014-05-10 17:00,2014-05-08 07:00,2014-05-10 17:00,2015-02-19 15:00,2015-02-22 15:00,,PT_Normal,,,,,hUYInWdPBUe4zU36umD39w,MbqM8emjvUeVLAynT0ti/A,,,N,0,0,,,2014-04-13 07:21,2014-04-14 16:04,admin,admin,
4308,144405,6971,40752,7842,0,N,N,N,CP_Phys,TT_Task,DT_FixedDrtn,TK_NotStart,CZA-TK-0506-2010,Inspection,8390,2468,0,40,0,0,0,40,0,0,0,,,,2015-02-17 15:00,2015-02-22 15:00,,2014-05-06 07:00,2014-05-10 17:00,2014-05-06 07:00,2014-05-10 17:00,2014-05-06 07:00,2014-05-10 17:00,2015-02-17 15:00,2015-02-22 15:00,,PT_Normal,,,,,o8FtMpUnEUuNkQnrq+VumA,QzVOQ8H/Q0W/jgkXnGyklA,,,N,0,0,,,2014-04-13 07:21,2014-04-14 16:04,admin,admin,
4309,144406,6971,40753,7842,0,N,N,N,CP_Phys,TT_Task,DT_FixedDrtn,TK_NotStart,CZA-TK-0506-2020,Erection and Fit-up,8390,2468,0,10,0,180.558458,180.558458,10,20,0,20,,,,2015-02-22 15:00,2015-02-23 15:00,,2014-05-11 07:00,2014-05-11 17:00,2014-05-11 07:00,2014-05-11 17:00,2014-05-11 07:00,2014-05-11 17:00,2015-02-22 15:00,2015-02-23 15:00,,PT_Normal,,,,,Kvjiqa/C3EW37/eXC0VTPw,mpdB06Zdck6AbSJEgv/Ngg,,,N,0,0,,,2014-04-13 07:21,2014-04-14 16:04,admin,admin,
4310,144407,6971,40753,7842,0,N,N,N,CP_Phys,TT_Task,DT_FixedDrtn,TK_NotStart,CZA-TK-0506-2030,Welding,8390,2468,0,40,0,225.698073,225.698073,40,80,0,80,,,,2015-02-23 15:00,2015-02-28 15:00,,2014-05-12 07:00,2014-05-15 17:00,2014-05-12 07:00,2014-05-15 17:00,2014-05-12 07:00,2014-05-15 17:00,2015-02-23 15:00,2015-02-28 15:00,,PT_Normal,,,,,PzMzwZrXQ0CDT8+/KpaByg,5/1KJeoo9ke7+Y4Oba0Mmg,,,N,0,0,,,2014-04-13 07:21,2014-04-14 16:04,admin,admin,
4311,144408,6971,40753,7842,0,N,N,N,CP_Phys,TT_Task,DT_FixedDrtn,TK_NotStart,CZA-TK-0506-2040,Inspection,8390,2468,0,50,0,45.139615,45.139615,50,0,0,0,,,,2015-02-22 15:00,2015-02-28 15:00,,2014-05-11 07:00,2014-05-15 17:00,2014-05-11 07:00,2014-05-15 17:00,2014-05-11 07:00,2014-05-15 17:00,2015-02-22 15:00,2015-02-28 15:00,,PT_Normal,,,,,eKoW6vwtaUe6wno94Tk8+w,vQeUd6qrA0++Me2R/idLwA,,,N,0,0,,,2014-04-13 07:21,2014-04-14 16:04,admin,admin,
4312,144409,6971,40754,7842,0,N,N,N,CP_Phys,TT_Task,DT_FixedDrtn,TK_NotStart,CZA-TK-0506-2050,Erection and Fit-up,8390,2468,0,10,0,180.558458,180.558458,10,20,0,20,,,,2015-02-28 15:00,2015-03-01 15:00,,2014-05-17 07:00,2014-05-17 17:00,2014-05-17 07:00,2014-05-17 17:00,2014-05-17 07:00,2014-05-17 17:00,2015-02-28 15:00,2015-03-01 15:00,,PT_Normal,,,,,UCD4pIrxikKy8MQQSW4vMA,hwEA1p/4pkqScjWMzJSR8w,,,N,0,0,,,2014-04-13 07:21,2014-04-14 16:04,admin,admin,
4313,144410,6971,40754,7842,0,N,N,N,CP_Phys,TT_Task,DT_FixedDrtn,TK_NotStart,CZA-TK-0506-2060,Welding,8390,2468,0,40,0,225.698073,225.698073,40,80,0,80,,,,2015-03-01 15:00,2015-03-05 15:00,,2014-05-18 07:00,2014-05-21 17:00,2014-05-18 07:00,2014-05-21 17:00,2014-05-18 07:00,2014-05-21 17:00,2015-03-01 15:00,2015-03-05 15:00,,PT_Normal,,,,,j837R3pqNUa4AO1FdJ51eA,AaVICYBYCEWosGvnRqpe3w,,,N,0,0,,,2014-04-13 07:21,2014-04-14 16:04,admin,admin,
4314,144411,6971,40754,7842,0,N,N,N,CP_Phys,TT_Task,DT_FixedDrtn,TK_NotStart,CZA-TK-0506-2070,Inspection,8390,2468,0,50,0,45.139615,45.139615,50,0,0,0,,,,2015-02-28 15:00,2015-03-05 15:00,,2014-05-17 07:00,2014-05-21 17:00,2014-05-17 07:00,2014-05-21 17:00,2014-05-17 07:00,2014-05-21 17:00,2015-02-28 15:00,2015-03-05 15:00,,PT_Normal,,,,,cbS636tf7UqE9kjvUbUS+w,QgVDlxp3oEiAIum3JFUX9A,,,N,0,0,,,2014-04-13 07:21,2014-04-14 16:04,admin,admin,
4315,144412,6971,40755,7842,0,N,N,N,CP_Phys,TT_Task,DT_FixedDrtn,TK_NotStart,CZA-TK-0506-2140,"Cutting, Installation and Fit-up",8390,2468,0,20,0,0,0,20,40,0,40,,,,2015-03-17 15:00,2015-03-19 15:00,,2014-06-03 07:00,2014-06-04 17:00,2014-06-03 07:00,2014-06-04 17:00,2014-06-03 07:00,2014-06-04 17:00,2015-03-17 15:00,2015-03-19 15:00,,PT_Normal,,,,,bTmPUtBQ4kenvYngayqBSg,yfRIXZUVxEWPSDFnDWpVcw,,,N,0,0,,,2014-04-13 07:21,2014-04-14 16:04,admin,admin,
4316,144413,6971,40755,7842,0,N,N,N,CP_Phys,TT_Task,DT_FixedDrtn,TK_NotStart,CZA-TK-0506-2150,Welding,8390,2468,0,40,0,0,0,40,80,0,80,,,,2015-03-19 15:00,2015-03-24 15:00,,2014-06-05 07:00,2014-06-09 17:00,2014-06-05 07:00,2014-06-09 17:00,2014-06-05 07:00,2014-06-09 17:00,2015-03-19 15:00,2015-03-24 15:00,,PT_Normal,,,,,PPMNgKTt2UuutkVJlFE0Hw,FzTUYz0o+U6QZMshyM9UAA,,,N,0,0,,,2014-04-13 07:21,2014-04-14 16:04,admin,admin,
4317,144414,6971,40755,7842,0,N,N,N,CP_Phys,TT_Task,DT_FixedDrtn,TK_NotStart,CZA-TK-0506-2160,Inspection,8390,2468,0,60,0,0,0,60,0,0,0,,,,2015-03-17 15:00,2015-03-24 15:00,,2014-06-03 07:00,2014-06-09 17:00,2014-06-03 07:00,2014-06-09 17:00,2014-06-03 07:00,2014-06-09 17:00,2015-03-17 15:00,2015-03-24 15:00,,PT_Normal,,,,,L9N7Okg3CkOzFIT6cRda4Q,c38kbV3+XE+TodIlfuElLw,,,N,0,0,,,2014-04-13 07:21,2014-04-14 16:04,admin,admin,
4318,144415,6971,40756,7842,0,N,N,N,CP_Phys,TT_Task,DT_FixedDrtn,TK_NotStart,CZA-TK-0506-2170,Erection and Fit-up,8390,2468,0,10,0,8.864939,8.864939,10,20,0,20,,,,2015-03-24 15:00,2015-03-25 15:00,,2014-06-10 07:00,2014-06-10 17:00,2014-06-10 07:00,2014-06-10 17:00,2014-06-10 07:00,2014-06-10 17:00,2015-03-24 15:00,2015-03-25 15:00,,PT_Normal,,,,,vCDzdnYHyUObOL+amTa99g,ricWiiz9402pnYnePqXOSA,,,N,0,0,,,2014-04-13 07:21,2014-04-14 16:04,admin,admin,
4319,144416,6971,40756,7842,0,N,N,N,CP_Phys,TT_Task,DT_FixedDrtn,TK_NotStart,CZA-TK-0506-2180,Welding,8390,2468,0,30,0,11.081174,11.081174,30,60,0,60,,,,2015-03-25 15:00,2015-03-29 15:00,,2014-06-11 07:00,2014-06-14 17:00,2014-06-11 07:00,2014-06-14 17:00,2014-06-11 07:00,2014-06-14 17:00,2015-03-25 15:00,2015-03-29 15:00,,PT_Normal,,,,,VUOmBd5bdUOVKcmC37ffPg,rx9I1jZCmEqUsoXH9XyEwQ,,,N,0,0,,,2014-04-13 07:21,2014-04-14 16:04,admin,admin,
4320,144417,6971,40756,7842,0,N,N,N,CP_Phys,TT_Task,DT_FixedDrtn,TK_NotStart,CZA-TK-0506-2190,Inspection,8390,2468,0,40,0,2.216235,2.216235,40,0,0,0,,,,2015-03-24 15:00,2015-03-29 15:00,,2014-06-10 07:00,2014-06-14 17:00,2014-06-10 07:00,2014-06-14 17:00,2014-06-10 07:00,2014-06-14 17:00,2015-03-24 15:00,2015-03-29 15:00,,PT_Normal,,,,,ud6tgAB1i0GIAnOAfCI7Fw,Kf/lTIJsUk62Gz+jdqrgtg,,,N,0,0,,,2014-04-13 07:21,2014-04-14 16:04,admin,admin,
4321,144418,6971,40757,7842,0,N,N,N,CP_Phys,TT_Task,DT_FixedDrtn,TK_NotStart,CZA-TK-0506-2200,Laying and Fit-up,8390,2468,0,30,0,8.864939,8.864939,30,60,0,60,,,,2015-03-29 15:00,2015-04-01 15:00,,2014-06-15 07:00,2014-06-17 17:00,2014-06-15 07:00,2014-06-17 17:00,2014-06-15 07:00,2014-06-17 17:00,2015-03-29 15:00,2015-04-01 15:00,,PT_Normal,,,,,xHWO/+onSEmy1BjjQ8HLVQ,VugkrEAK3U+tbXU7QO2RvA,,,N,0,0,,,2014-04-13 07:21,2014-04-14 16:04,admin,admin,
4322,144419,6971,40757,7842,0,N,N,N,CP_Phys,TT_Task,DT_FixedDrtn,TK_NotStart,CZA-TK-0506-2210,Welding,8390,2468,0,40,0,11.081174,11.081174,40,80,0,80,,,,2015-04-01 15:00,2015-04-06 15:00,,2014-06-18 07:00,2014-06-22 17:00,2014-06-18 07:00,2014-06-22 17:00,2014-06-18 07:00,2014-06-22 17:00,2015-04-01 15:00,2015-04-06 15:00,,PT_Normal,,,,,UHK7tR2GZE25ee1DDYizVQ,LCjxyGKUA0aFPk1miFUUKA,,,N,0,0,,,2014-04-13 07:21,2014-04-14 16:04,admin,admin,
4323,144420,6971,40757,7842,0,N,N,N,CP_Phys,TT_Task,DT_FixedDrtn,TK_NotStart,CZA-TK-0506-2220,Inspection,8390,2468,0,70,0,2.216235,2.216235,70,0,0,0,,,,2015-03-29 15:00,2015-04-06 15:00,,2014-06-15 07:00,2014-06-22 17:00,2014-06-15 07:00,2014-06-22 17:00,2014-06-15 07:00,2014-06-22 17:00,2015-03-29 15:00,2015-04-06 15:00,,PT_Normal,,,,,NcpeLdAXVkqoLrI+Qv+U9Q,+k1f34HGgECzUFvkBEWhzA,,,N,0,0,,,2014-04-13 07:21,2014-04-14 16:04,admin,admin,
4324,144421,6971,40758,7842,0,N,N,N,CP_Phys,TT_Task,DT_FixedDrtn,TK_NotStart,CZA-TK-0506-2230,Laying and Fit-up,8390,2468,0,20,0,0,0,20,40,0,40,,,,2015-04-06 15:00,2015-04-08 15:00,,2014-06-23 07:00,2014-06-24 17:00,2014-06-23 07:00,2014-06-24 17:00,2014-06-23 07:00,2014-06-24 17:00,2015-04-06 15:00,2015-04-08 15:00,,PT_Normal,,,,,i+GLpHXsjkGJnwzdbhS0Zg,LsUlg2skNUOSaiflakhv4Q,,,N,0,0,,,2014-04-13 07:21,2014-04-14 16:04,admin,admin,
4325,144422,6971,40758,7842,0,N,N,N,CP_Phys,TT_Task,DT_FixedDrtn,TK_NotStart,CZA-TK-0506-2240,Welding,8390,2468,0,50,0,0,0,50,100,0,100,,,,2015-04-08 15:00,2015-04-14 15:00,,2014-06-25 07:00,2014-06-30 17:00,2014-06-25 07:00,2014-06-30 17:00,2014-06-25 07:00,2014-06-30 17:00,2015-04-08 15:00,2015-04-14 15:00,,PT_Normal,,,,,CuhX4u2hF0+x7JgI9l3soA,U8Cty32M8UeAVj9Z05otxw,,,N,0,0,,,2014-04-13 07:21,2014-04-14 16:04,admin,admin,
4326,144423,6971,40758,7842,0,N,N,N,CP_Phys,TT_Task,DT_FixedDrtn,TK_NotStart,CZA-TK-0506-2250,Inspection,8390,2468,0,70,0,0,0,70,0,0,0,,,,2015-04-06 15:00,2015-04-14 15:00,,2014-06-23 07:00,2014-06-30 17:00,2014-06-23 07:00,2014-06-30 17:00,2014-06-23 07:00,2014-06-30 17:00,2015-04-06 15:00,2015-04-14 15:00,,PT_Normal,,,,,vwAwxVit6Eu7/UxfQRm+LA,reMMT2oYwEuAPXlHCGchCQ,,,N,0,0,,,2014-04-13 07:21,2014-04-14 16:04,admin,admin,
4327,144424,6971,40759,7842,0,N,N,N,CP_Phys,TT_Task,DT_FixedDrtn,TK_NotStart,CZA-TK-0506-2260,Installation and Fit-up,8390,2468,0,20,0,0,0,20,40,0,40,,,,2015-04-14 15:00,2015-04-16 15:00,,2014-07-01 07:00,2014-07-02 17:00,2014-07-01 07:00,2014-07-02 17:00,2014-07-01 07:00,2014-07-02 17:00,2015-04-14 15:00,2015-04-16 15:00,,PT_Normal,,,,,fXS3CiYQuEmiN8qENz+t7g,WQ8cQYyUpEeJkWUfXERRvQ,,,N,0,0,,,2014-04-13 07:21,2014-04-14 16:04,admin,admin,
4328,144425,6971,40759,7842,0,N,N,N,CP_Phys,TT_Task,DT_FixedDrtn,TK_NotStart,CZA-TK-0506-2270,Welding,8390,2468,0,30,0,0,0,30,60,0,60,,,,2015-04-16 15:00,2015-04-20 15:00,,2014-07-03 07:00,2014-07-06 17:00,2014-07-03 07:00,2014-07-06 17:00,2014-07-03 07:00,2014-07-06 17:00,2015-04-16 15:00,2015-04-20 15:00,,PT_Normal,,,,,ANRpIRBb+UCrTqMQOHl8jA,Y1tr5HfrKUqjfREVrfbWjQ,,,N,0,0,,,2014-04-13 07:21,2014-04-14 16:04,admin,admin,
4329,144426,6971,40759,7842,0,N,N,N,CP_Phys,TT_Task,DT_FixedDrtn,TK_NotStart,CZA-TK-0506-2280,Inspection,8390,2468,0,50,0,0,0,50,0,0,0,,,,2015-04-14 15:00,2015-04-20 15:00,,2014-07-01 07:00,2014-07-06 17:00,2014-07-01 07:00,2014-07-06 17:00,2014-07-01 07:00,2014-07-06 17:00,2015-04-14 15:00,2015-04-20 15:00,,PT_Normal,,,,,AxHfEy9wuUqzaS4d4SygVA,mDc8nw9XoEu9fuFRiGfkNw,,,N,0,0,,,2014-04-13 07:21,2014-04-14 16:04,admin,admin,
4330,144427,6971,40760,7842,0,N,N,N,CP_Phys,TT_Task,DT_FixedDrtn,TK_NotStart,CZA-TK-0506-2290,Erection and Fit-up,8390,2468,0,30,0,0,0,30,60,0,60,,,,2015-04-20 15:00,2015-04-23 15:00,,2014-07-07 07:00,2014-07-09 17:00,2014-07-07 07:00,2014-07-09 17:00,2014-07-07 07:00,2014-07-09 17:00,2015-04-20 15:00,2015-04-23 15:00,,PT_Normal,,,,,ndcRYin1K0OZs/6ju3EZrQ,8RWdYbM96ECDM4DPsloxCg,,,N,0,0,,,2014-04-13 07:21,2014-04-14 16:04,admin,admin,
4331,144428,6971,40760,7842,0,N,N,N,CP_Phys,TT_Task,DT_FixedDrtn,TK_NotStart,CZA-TK-0506-2300,Welding,8390,2468,0,70,0,0,0,70,140,0,140,,,,2015-04-23 15:00,2015-05-02 15:00,,2014-07-10 07:00,2014-07-17 17:00,2014-07-10 07:00,2014-07-17 17:00,2014-07-10 07:00,2014-07-17 17:00,2015-04-23 15:00,2015-05-02 15:00,,PT_Normal,,,,,g9THwCf4h0+zwlD4EMs8Xw,lZHL6cEGqEa8C8rnrxR7uQ,,,N,0,0,,,2014-04-13 07:21,2014-04-14 16:04,admin,admin,
4332,144429,6971,40760,7842,0,N,N,N,CP_Phys,TT_Task,DT_FixedDrtn,TK_NotStart,CZA-TK-0506-2310,Inspection,8390,2468,0,100,0,0,0,100,0,0,0,,,,2015-04-20 15:00,2015-05-02 15:00,,2014-07-07 07:00,2014-07-17 17:00,2014-07-07 07:00,2014-07-17 17:00,2014-07-07 07:00,2014-07-17 17:00,2015-04-20 15:00,2015-05-02 15:00,,PT_Normal,,,,,jOC4X0217UmibjlwSsWQhQ,M5SXcwZEnEyXU4+0YlYJew,,,N,0,0,,,2014-04-13 07:21,2014-04-14 16:04,admin,admin,
4333,144430,6971,40761,7842,0,N,N,N,CP_Phys,TT_Task,DT_FixedDrtn,TK_NotStart,CZA-TK-0506-2080,Erection and Fit-up,8390,2468,0,10,0,18.5402,18.5402,10,20,0,20,,,,2015-03-05 15:00,2015-03-07 15:00,,2014-05-22 07:00,2014-05-22 17:00,2014-05-22 07:00,2014-05-22 17:00,2014-05-22 07:00,2014-05-22 17:00,2015-03-05 15:00,2015-03-07 15:00,,PT_Normal,,,,,BEblx1TcUkODnWc6Nx/yjQ,CChypMA5Q0GURaacF8au6w,,,N,0,0,,,2014-04-13 07:21,2014-04-14 16:04,admin,admin,
4334,144431,6971,40761,7842,0,N,N,N,CP_Phys,TT_Task,DT_FixedDrtn,TK_NotStart,CZA-TK-0506-2090,Welding,8390,2468,0,40,0,23.17525,23.17525,40,80,0,80,,,,2015-03-07 15:00,2015-03-11 15:00,,2014-05-24 07:00,2014-05-27 17:00,2014-05-24 07:00,2014-05-27 17:00,2014-05-24 07:00,2014-05-27 17:00,2015-03-07 15:00,2015-03-11 15:00,,PT_Normal,,,,,MM1AXUYBVEC1ag3qymIzLw,lD6aAxPBYUSFsGOa8A1g8g,,,N,0,0,,,2014-04-13 07:21,2014-04-14 16:04,admin,admin,
4335,144432,6971,40761,7842,0,N,N,N,CP_Phys,TT_Task,DT_FixedDrtn,TK_NotStart,CZA-TK-0506-2100,Inspection,8390,2468,0,50,0,4.63505,4.63505,50,0,0,0,,,,2015-03-05 15:00,2015-03-11 15:00,,2014-05-22 07:00,2014-05-27 17:00,2014-05-22 07:00,2014-05-27 17:00,2014-05-22 07:00,2014-05-27 17:00,2015-03-05 15:00,2015-03-11 15:00,,PT_Normal,,,,,SsnCDl9JH06WT9EvsYy8xg,N09bE6MJgUaT23cq8XsF4Q,,,N,0,0,,,2014-04-13 07:21,2014-04-14 16:04,admin,admin,
4336,144433,6971,40762,7842,0,N,N,N,CP_Phys,TT_Task,DT_FixedDrtn,TK_NotStart,CZA-TK-0506-2320,Erection and Fit-up,8390,2468,0,30,0,0,0,30,60,0,60,,,,2015-04-25 15:00,2015-04-28 15:00,,2014-07-12 07:00,2014-07-14 17:00,2014-07-12 07:00,2014-07-14 17:00,2014-07-12 07:00,2014-07-14 17:00,2015-04-25 15:00,2015-04-28 15:00,,PT_Normal,,,,,q/Z4WjCs3U+TFOuBRBXNUg,i7dFXDZIWEKM5WIK7CDkPQ,,,N,0,0,,,2014-04-13 07:21,2014-04-14 16:04,admin,admin,
4337,144434,6971,40762,7842,0,N,N,N,CP_Phys,TT_Task,DT_FixedDrtn,TK_NotStart,CZA-TK-0506-2340,Inspection,8390,2468,0,110,0,0,0,110,0,0,0,,,,2015-04-25 15:00,2015-05-07 15:00,,2014-07-12 07:00,2014-07-23 17:00,2014-07-12 07:00,2014-07-23 17:00,2014-07-12 07:00,2014-07-23 17:00,2015-04-25 15:00,2015-05-07 15:00,,PT_Normal,,,,,9U3sRWn3MUmvw3PlZuI4dg,qKRT+2Lwv0ayHMr3/DXHWw,,,N,0,0,,,2014-04-13 07:21,2014-04-14 16:04,admin,admin,
4338,144435,6971,40762,7842,0,N,N,N,CP_Phys,TT_Task,DT_FixedDrtn,TK_NotStart,CZA-TK-0506-2330,Welding,8390,2468,0,80,0,0,0,80,160,0,160,,,,2015-04-28 15:00,2015-05-07 15:00,,2014-07-15 07:00,2014-07-23 17:00,2014-07-15 07:00,2014-07-23 17:00,2014-07-15 07:00,2014-07-23 17:00,2015-04-28 15:00,2015-05-07 15:00,,PT_Normal,,,,,wrmlRJffs0GEAiw50R6EVQ,bKgUWHLlMUKuJliixTfGxA,,,N,0,0,,,2014-04-13 07:21,2014-04-14 16:04,admin,admin,
4339,144436,6971,40763,7842,0,N,N,N,CP_Phys,TT_Task,DT_FixedDrtn,TK_NotStart,CZA-TK-0506-2350,Installation of Primary and Secondary Seal,8390,2468,0,30,0,0,0,30,0,0,0,,,,2015-05-07 15:00,2015-05-11 15:00,,2014-07-24 07:00,2014-07-27 17:00,2014-07-24 07:00,2014-07-27 17:00,2014-07-24 07:00,2014-07-27 17:00,2015-05-07 15:00,2015-05-11 15:00,,PT_Normal,,,,,PSvAMenopkCnWczZl5SGuw,P99P4r9WdUylEY8o6+iCxA,,,N,0,0,,,2014-04-13 07:21,2014-04-14 16:04,admin,admin,
4340,144437,6971,40763,7842,0,N,N,N,CP_Phys,TT_Task,DT_FixedDrtn,TK_NotStart,CZA-TK-0506-2360,Inspection,8390,2468,0,10,0,0,0,10,0,0,0,,,,2015-05-11 15:00,2015-05-12 15:00,,2014-07-28 07:00,2014-07-28 17:00,2014-07-28 07:00,2014-07-28 17:00,2014-07-28 07:00,2014-07-28 17:00,2015-05-11 15:00,2015-05-12 15:00,,PT_Normal,,,,,PEuP3r3dm0qa2FebRYkUPQ,96wWK9neQkOPc4+hAdcfbw,,,N,0,0,,,2014-04-13 07:21,2014-04-14 16:04,admin,admin,
4341,144438,6971,40764,7842,0,N,N,N,CP_Phys,TT_Task,DT_FixedDrtn,TK_NotStart,CZA-TK-0506-2370,Insulation Works,8390,2468,0,130,0,0,0,130,0,0,0,,,,2015-05-12 15:00,2015-05-27 15:00,,2014-07-29 07:00,2014-08-12 17:00,2014-07-29 07:00,2014-08-12 17:00,2014-07-29 07:00,2014-08-12 17:00,2015-05-12 15:00,2015-05-27 15:00,,PT_Normal,,,,,Jr9DyFXRd0mhuUsoD5OJYA,C1nq3H/5KkKAyWGJq0RjEw,,,N,0,0,,,2014-04-13 07:21,2014-04-14 16:04,admin,admin,
4342,144439,6971,40764,7842,0,N,N,N,CP_Phys,TT_Task,DT_FixedDrtn,TK_NotStart,CZA-TK-0506-2380,Inspection,8390,2468,0,10,0,0,0,10,0,0,0,,,,2015-05-27 15:00,2015-05-28 15:00,,2014-08-13 07:00,2014-08-13 17:00,2014-08-13 07:00,2014-08-13 17:00,2014-08-13 07:00,2014-08-13 17:00,2015-05-27 15:00,2015-05-28 15:00,,PT_Normal,,,,,0GU1uf1xnEeEgW0JWWfvZw,TORacmC2Ckq3tivo+lZPzQ,,,N,0,0,,,2014-04-13 07:21,2014-04-14 16:04,admin,admin,
4343,144440,6971,40765,7842,0,N,N,N,CP_Phys,TT_Task,DT_FixedDrtn,TK_NotStart,CZA-TK-0506-2110,Erection and Fit-up,8390,2468,0,10,0,72.408825,72.408825,10,20,0,20,,,,2015-03-11 15:00,2015-03-12 15:00,,2014-05-28 07:00,2014-05-28 17:00,2014-05-28 07:00,2014-05-28 17:00,2014-05-28 07:00,2014-05-28 17:00,2015-03-11 15:00,2015-03-12 15:00,,PT_Normal,,,,,6f+b0XGblkGMdcOA3MYeBA,00VeZCbCD0umJMwnHe/A/A,,,N,0,0,,,2014-04-13 07:21,2014-04-14 16:04,admin,admin,
4344,144441,6971,40765,7842,0,N,N,N,CP_Phys,TT_Task,DT_FixedDrtn,TK_NotStart,CZA-TK-0506-2120,Welding,8390,2468,0,40,0,90.511031,90.511031,40,80,0,80,,,,2015-03-12 15:00,2015-03-17 15:00,,2014-05-29 07:00,2014-06-02 17:00,2014-05-29 07:00,2014-06-02 17:00,2014-05-29 07:00,2014-06-02 17:00,2015-03-12 15:00,2015-03-17 15:00,,PT_Normal,,,,,f2cxrgZ+gE2XfIYLKnMiow,URFxv0vJMESOZfuKJ0nArw,,,N,0,0,,,2014-04-13 07:21,2014-04-14 16:04,admin,admin,
4345,144442,6971,40765,7842,0,N,N,N,CP_Phys,TT_Task,DT_FixedDrtn,TK_NotStart,CZA-TK-0506-2130,Inspection,8390,2468,0,50,0,18.102206,18.102206,50,0,0,0,,,,2015-03-11 15:00,2015-03-17 15:00,,2014-05-28 07:00,2014-06-02 17:00,2014-05-28 07:00,2014-06-02 17:00,2014-05-28 07:00,2014-06-02 17:00,2015-03-11 15:00,2015-03-17 15:00,,PT_Normal,,,,,Tq10KW3LUk66zJFIdJh5Pg,XhzPgdijhkyDpqClhrZG4g,,,N,0,0,,,2014-04-13 07:21,2014-04-14 16:04,admin,admin,
4346,144443,6971,39971,7842,0,N,N,N,CP_Phys,TT_Mile,DT_FixedDrtn,TK_NotStart,CZA-TK-0506-1860,Foundation Takeover from Client,,0,0,0,0,0,0,0,0,0,0,2014-04-15 00:00,,,2014-04-14 17:00,2014-04-14 17:00,,2014-04-15 07:00,2014-04-15 07:00,2014-04-15 07:00,2014-04-15 07:00,2014-04-15 07:00,2014-04-15 07:00,2014-04-14 17:00,2014-04-14 17:00,CS_MSO,PT_Normal,,,,,Q3IOwrkVMUO2pdI89RRERw,g54YjvtHbE6YbK+j+G9wyw,,,N,0,0,,,2014-04-13 07:21,2014-04-13 07:42,admin,admin,
4347,144444,6971,39950,7842,0,N,N,N,CP_Phys,TT_Task,DT_FixedDrtn,TK_NotStart,CZA-TK-0506-2400,"Blasting and Painting of Bottom, Shell and Roof (Inside and Outside)",8390,2478,0,90,0,879.598982,879.598982,90,0,0,0,,,,2015-06-09 15:00,2015-06-20 15:00,,2014-08-25 07:00,2014-09-03 17:00,2014-08-25 07:00,2014-09-03 17:00,2014-08-25 07:00,2014-09-03 17:00,2015-06-09 15:00,2015-06-20 15:00,,PT_Normal,,,,,ons15QRma0K8iCV18Nq59w,bGYjnmwpb065ErxM2zT6aA,,,N,0,0,,,2014-04-13 07:21,2014-04-14 16:04,admin,admin,
4348,144445,6971,39937,7842,0,N,N,N,CP_Phys,TT_Task,DT_FixedDrtn,TK_NotStart,CZA-TK-0506-1710,Cutting of Annular Plate,8495,2922,0,10,0,168.96,168.96,10,0,0,0,,,,2015-01-31 15:00,2015-02-01 15:00,,2014-02-24 13:00,2014-02-25 13:00,2014-02-24 13:00,2014-02-25 13:00,2014-02-24 13:00,2014-02-25 13:00,2015-01-31 15:00,2015-02-01 15:00,,PT_Normal,,,,,J4iatOSJoEWk47pTmMtjYg,xJncpA0LVUaOu7SY1m/lJw,,,N,0,0,,,2014-04-13 07:21,2014-04-14 17:03,admin,admin,
4349,144446,6971,39937,7842,0,N,N,N,CP_Phys,TT_Task,DT_FixedDrtn,TK_NotStart,CZA-TK-0506-1720,Cutting of Bottom Plates,8495,3209.5,0,10,0,262.41,262.41,10,0,0,0,,,,2015-03-07 12:30,2015-03-08 12:30,,2014-02-25 13:00,2014-02-26 13:00,2014-02-25 13:00,2014-02-26 13:00,2014-02-25 13:00,2014-02-26 13:00,2015-03-07 12:30,2015-03-08 12:30,,PT_Normal,,,,,/WxempCELEm1CNidzxwD5A,MHaCC7raV0umMbJhoBSNtQ,,,N,0,0,,,2014-04-13 07:21,2014-04-14 17:03,admin,admin,
4350,144447,6971,39937,7842,0,N,N,N,CP_Phys,TT_Task,DT_FixedDrtn,TK_NotStart,CZA-TK-0506-1730,"Cutting, Bevelling & Rolling of Shell No.1",8495,3209.5,0,10,0,270.6132,270.6132,10,0,0,0,,,,2015-03-08 12:30,2015-03-09 12:30,,2014-02-26 13:00,2014-02-27 13:00,2014-02-26 13:00,2014-02-27 13:00,2014-02-26 13:00,2014-02-27 13:00,2015-03-08 12:30,2015-03-09 12:30,,PT_Normal,,,,,gp9udgjuAk2vP0uG5h/BQQ,/AolqPFGn0SuWXjNKJWW9A,,,N,0,0,,,2014-04-13 07:21,2014-04-14 17:03,admin,admin,
4351,144448,6971,39937,7842,0,N,N,N,CP_Phys,TT_Task,DT_FixedDrtn,TK_NotStart,CZA-TK-0506-1740,"Cutting, Bevelling & Rolling of Shell No.2",8495,3209.5,0,10,0,240.594,240.594,10,0,0,0,,,,2015-03-09 12:30,2015-03-10 12:30,,2014-02-27 13:00,2014-03-01 13:00,2014-02-27 13:00,2014-03-01 13:00,2014-02-27 13:00,2014-03-01 13:00,2015-03-09 12:30,2015-03-10 12:30,,PT_Normal,,,,,KuigbzOJg0eXPT+leOrcNA,gRUl5A8BJkudRdETMRC6QA,,,N,0,0,,,2014-04-13 07:21,2014-04-14 17:03,admin,admin,
4352,144449,6971,39937,7842,0,N,N,N,CP_Phys,TT_Task,DT_FixedDrtn,TK_NotStart,CZA-TK-0506-1750,"Cutting, Fit-up and Welding of Shell Nozzles,Manholes and Other Appurtanances",8495,3209.5,0,70,0,0,0,70,0,0,0,,,,2015-03-10 12:30,2015-03-18 12:30,,2014-03-01 13:00,2014-03-09 13:00,2014-03-01 13:00,2014-03-09 13:00,2014-03-01 13:00,2014-03-09 13:00,2015-03-10 12:30,2015-03-18 12:30,,PT_Normal,,,,,1VKFVqUWTUuTHHRoFcybuQ,U2vTWJYPcEG5SniGwgosmg,,,N,0,0,,,2014-04-13 07:21,2014-04-14 17:03,admin,admin,
4353,144450,6971,39937,7842,0,N,N,N,CP_Phys,TT_Task,DT_FixedDrtn,TK_NotStart,CZA-TK-0506-1760,"Cutting, Bevelling & Rolling of Shell No.3",8495,3209.5,0,10,0,412.446,412.446,10,0,0,0,,,,2015-03-18 12:30,2015-03-19 12:30,,2014-03-09 13:00,2014-03-10 13:00,2014-03-09 13:00,2014-03-10 13:00,2014-03-09 13:00,2014-03-10 13:00,2015-03-18 12:30,2015-03-19 12:30,,PT_Normal,,,,,k3EqeXMFv0eHktNZvwM+/A,VjGhdSGoHUaQ5+XVwWbWwQ,,,N,0,0,,,2014-04-13 07:21,2014-04-14 17:03,admin,admin,
4354,144451,6971,39937,7842,0,N,N,N,CP_Phys,TT_Task,DT_FixedDrtn,TK_NotStart,CZA-TK-0506-1770,"Cutting, Bevelling & Rolling of Shell No.4",8495,3209.5,0,10,0,412.446,412.446,10,0,0,0,,,,2015-03-19 12:30,2015-03-21 12:30,,2014-03-10 13:00,2014-03-11 13:00,2014-03-10 13:00,2014-03-11 13:00,2014-03-10 13:00,2014-03-11 13:00,2015-03-19 12:30,2015-03-21 12:30,,PT_Normal,,,,,Z/XdsJBlOUiIwZuP8dowCA,mL9foe+F20y1J690zS6ctw,,,N,0,0,,,2014-04-13 07:21,2014-04-14 17:03,admin,admin,
4355,144452,6971,39937,7842,0,N,N,N,CP_Phys,TT_Task,DT_FixedDrtn,TK_NotStart,CZA-TK-0506-1780,"Cutting, Bevelling & Rolling of Shell No.5",8495,3209.5,0,10,0,42.351,42.351,10,0,0,0,,,,2015-03-21 12:30,2015-03-22 12:30,,2014-03-11 13:00,2014-03-12 13:00,2014-03-11 13:00,2014-03-12 13:00,2014-03-11 13:00,2014-03-12 13:00,2015-03-21 12:30,2015-03-22 12:30,,PT_Normal,,,,,mbNhgHJ7NUe5KLkbRABGSw,PIUt70cHDkee8Mtyy9WFfg,,,N,0,0,,,2014-04-13 07:21,2014-04-14 17:03,admin,admin,
4356,144453,6971,39937,7842,0,N,N,N,CP_Phys,TT_Task,DT_FixedDrtn,TK_NotStart,CZA-TK-0506-1790,"Cutting, Bevelling & Rolling of Shell No.6",8495,3209.5,0,10,0,165.402,165.402,10,0,0,0,,,,2015-03-22 12:30,2015-03-23 12:30,,2014-03-12 13:00,2014-03-13 13:00,2014-03-12 13:00,2014-03-13 13:00,2014-03-12 13:00,2014-03-13 13:00,2015-03-22 12:30,2015-03-23 12:30,,PT_Normal,,,,,+1eH3bL0bkGxKm2hu9RkqQ,ixLWF9yhAUex9uJtrHp4Vw,,,N,0,0,,,2014-04-13 07:21,2014-04-14 17:03,admin,admin,
4357,144454,6971,39937,7842,0,N,N,N,CP_Phys,TT_Task,DT_FixedDrtn,TK_NotStart,CZA-TK-0506-1800,"Cutting, Bevelling & Rolling of Curb Angle",8495,3209.5,0,20,0,20.25,20.25,20,0,0,0,,,,2015-03-23 12:30,2015-03-25 12:30,,2014-03-13 13:00,2014-03-16 13:00,2014-03-13 13:00,2014-03-16 13:00,2014-03-13 13:00,2014-03-16 13:00,2015-03-23 12:30,2015-03-25 12:30,,PT_Normal,,,,,ywbKjFtF/keGUvwU/pS9Pg,sqWQ3UjwG0SxeQZKhj/v4Q,,,N,0,0,,,2014-04-13 07:21,2014-04-14 17:03,admin,admin,
4358,144455,6971,39937,7842,0,N,N,N,CP_Phys,TT_Task,DT_FixedDrtn,TK_NotStart,CZA-TK-0506-1810,"Cutting, Bevelling & Rolling of Roof Structure",8495,3209.5,0,50,0,417.8124,417.8124,50,0,0,0,,,,2015-03-25 12:30,2015-03-31 12:30,,2014-03-16 13:00,2014-03-22 13:00,2014-03-16 13:00,2014-03-22 13:00,2014-03-16 13:00,2014-03-22 13:00,2015-03-25 12:30,2015-03-31 12:30,,PT_Normal,,,,,5N8fAUN97kWDH1w/YqbCRg,Supt8lJvZ0WGbTiZLWC7Cw,,,N,0,0,,,2014-04-13 07:21,2014-04-14 17:03,admin,admin,
4359,144456,6971,39937,7842,0,N,N,N,CP_Phys,TT_Task,DT_FixedDrtn,TK_NotStart,CZA-TK-0506-1820,Cutting of Roof Plates,8495,3209.5,0,12.5,0,0,0,12.5,0,0,0,,,,2015-03-31 12:30,2015-04-01 15:00,,2014-03-22 13:00,2014-03-23 15:30,2014-03-22 13:00,2014-03-23 15:30,2014-03-22 13:00,2014-03-23 15:30,2015-03-31 12:30,2015-04-01 15:00,,PT_Normal,,,,,tkIxSasTPkuBJjd2kLdKFw,daltNyNjX0ywQGwwk3R5Sg,,,N,0,0,,,2014-04-13 07:21,2014-04-14 17:03,admin,admin,
4360,144457,6971,39937,7842,0,N,N,N,CP_Phys,TT_Task,DT_FixedDrtn,TK_NotStart,CZA-TK-0506-1830,"Cutting,Fit-up and Welding of Roof Nozzles, Manholes & Other Appurtanances",8495,3209.5,0,70,0,0,0,70,0,0,0,,,,2015-04-01 15:00,2015-04-09 15:00,,2014-03-23 15:30,2014-03-31 15:30,2014-03-23 15:30,2014-03-31 15:30,2014-03-23 15:30,2014-03-31 15:30,2015-04-01 15:00,2015-04-09 15:00,,PT_Normal,,,,,weDYh/tMoEaj2ZJTgjn+lA,dR8ZY7+7eUKEdrCxavVrSQ,,,N,0,0,,,2014-04-13 07:21,2014-04-14 17:03,admin,admin,
4361,144458,6971,39937,7842,0,N,N,N,CP_Phys,TT_Task,DT_FixedDrtn,TK_NotStart,CZA-TK-0506-1840,"Cutting, Fit-up & Welding  of Roof Platform, Gratings and Handrails",8495,3209.5,0,120,0,0,0,120,0,0,0,,,,2015-04-04 11:00,2015-04-18 11:00,,2014-03-25 11:30,2014-04-08 11:30,2014-03-25 11:30,2014-04-08 11:30,2014-03-25 11:30,2014-04-08 11:30,2015-04-04 11:00,2015-04-18 11:00,,PT_Normal,,,,,qwN7FI+XBUi/e/dmp1iC1g,8rYJ7jym9EOq/aHZVD78Ng,,,N,0,0,,,2014-04-13 07:21,2014-04-14 17:03,admin,admin,
4362,144459,6971,39937,7842,0,N,N,N,CP_Phys,TT_Task,DT_FixedDrtn,TK_NotStart,CZA-TK-0506-1850,"Cutting, Fit-up and Welding of Stairway Platfrom, Gratings and Handrails",8495,3209.5,741.5,120,0,0,0,120,0,0,0,,,,2015-04-06 15:00,2015-04-20 15:00,,2014-03-27 15:30,2014-04-10 15:30,2014-03-27 15:30,2014-04-10 15:30,2014-03-27 15:30,2014-04-10 15:30,2015-04-06 15:00,2015-04-20 15:00,,PT_Normal,,,,,7GtAdAorWEG+5Kbs2+5cGA,2UCo15ZBVEutnreJGcFdZg,,,N,0,0,,,2014-04-13 07:21,2014-04-14 17:03,admin,admin,
