,task_id,proj_id,wbs_id,clndr_id,est_wt,phys_complete_pct,rev_fdbk_flag,lock_plan_flag,auto_compute_act_flag,complete_pct_type,task_type,duration_type,review_type,status_code,task_code,task_name,rsrc_id,total_float_hr_cnt,free_float_hr_cnt,remain_drtn_hr_cnt,act_work_qty,remain_work_qty,target_work_qty,target_drtn_hr_cnt,target_equip_qty,act_equip_qty,remain_equip_qty,cstr_date,act_start_date,act_end_date,late_start_date,late_end_date,expect_end_date,early_start_date,early_end_date,restart_date,reend_date,target_start_date,target_end_date,review_end_date,rem_late_start_date,rem_late_end_date,cstr_type,priority_type,suspend_date,resume_date,float_path,float_path_order,guid,tmpl_guid,cstr_date2,cstr_type2,driving_path_flag,act_this_per_work_qty,act_this_per_equip_qty,external_early_start_date,external_late_end_date,create_date,update_date,create_user,update_user
0,119995,3211,18113,794,0,0,N,N,N,CP_Drtn,TT_Mile,DT_FixedDrtn,RV_OK,TK_NotStart,A1010,Project Start,,0,0,0,0,0,0,0,0,0,0,2012-05-01 08:00,,,2012-05-01 08:00,2012-05-01 08:00,,2012-05-01 08:00,2012-05-01 08:00,2012-05-01 08:00,2012-05-01 08:00,2012-05-01 08:00,2012-05-01 08:00,,2012-05-01 08:00,2012-05-01 08:00,CS_MSOB,PT_Normal,,,,,kE7Ji32KpUOPL8EScLb3pw,,,,Y,0,0,,,2012-04-22 09:40,2012-04-22 10:21,admin,admin
1,120010,3211,18135,794,1,0,N,N,N,CP_Drtn,TT_Task,DT_FixedDUR2,RV_OK,TK_NotStart,BA-P1-10,Excavation  till Level  (-1.4),,8,0,184,0,0,0,184,0,0,0,,,,2012-05-02 08:00,2012-05-24 17:00,,2012-05-01 08:00,2012-05-23 17:00,2012-05-01 08:00,2012-05-23 17:00,2012-05-01 08:00,2012-05-23 17:00,,2012-05-02 08:00,2012-05-24 17:00,,PT_Normal,,,,,y8x1R9Y930S2rp149qiYlg,,,,Y,0,0,,,2012-04-22 09:40,2012-04-22 10:21,admin,admin
2,120011,3211,18135,794,1,0,N,N,N,CP_Drtn,TT_Task,DT_FixedDUR2,RV_OK,TK_NotStart,BA-P1-30,Piles Work,,8,0,160,0,0,0,160,0,0,0,,,,2012-05-25 08:00,2012-06-13 17:00,,2012-05-24 08:00,2012-06-12 17:00,2012-05-24 08:00,2012-06-12 17:00,2012-05-24 08:00,2012-06-12 17:00,,2012-05-25 08:00,2012-06-13 17:00,,PT_Normal,,,,,nN4Y1BwHDUu9FEp+8sPtxQ,,,,Y,0,0,,,2012-04-22 09:40,2012-04-22 10:21,admin,admin
3,120012,3211,18135,794,1,0,N,N,N,CP_Drtn,TT_Task,DT_FixedDUR2,RV_OK,TK_NotStart,BA-P1-40,P.C For Footings,,8,0,200,0,0,0,200,0,0,0,,,,2012-06-04 08:00,2012-06-28 17:00,,2012-06-03 08:00,2012-06-27 17:00,2012-06-03 08:00,2012-06-27 17:00,2012-06-03 08:00,2012-06-27 17:00,,2012-06-04 08:00,2012-06-28 17:00,,PT_Normal,,,,,20psqwu1mEmAG+Eu5renAw,6U4Y/9E5YkKoyHftOu6YOg,,,Y,0,0,,,2012-04-22 09:40,2012-04-22 10:21,admin,admin
4,120013,3211,18135,794,1,0,N,N,N,CP_Drtn,TT_Task,DT_FixedDUR2,RV_OK,TK_NotStart,BA-P1-50,R.C For Footings,,8,0,320,0,0,0,320,0,0,0,,,,2012-06-14 08:00,2012-07-23 17:00,,2012-06-13 08:00,2012-07-22 17:00,2012-06-13 08:00,2012-07-22 17:00,2012-06-13 08:00,2012-07-22 17:00,,2012-06-14 08:00,2012-07-23 17:00,,PT_Normal,,,,,9Aajy9mFBEWfHv8b3nEtYQ,z1sYfzi1bkW7xKaDf3rnDg,,,Y,0,0,,,2012-04-22 09:40,2012-04-22 10:21,admin,admin
5,120014,3211,18143,794,1,0,N,N,N,CP_Drtn,TT_Task,DT_FixedDUR2,RV_OK,TK_NotStart,BA-P1-70,Insulation Works For R.C Footings (-1.4),,8,0,120,0,0,0,120,0,0,0,,,,2012-08-13 08:00,2012-08-27 17:00,,2012-08-12 08:00,2012-08-26 17:00,2012-08-12 08:00,2012-08-26 17:00,2012-08-12 08:00,2012-08-26 17:00,,2012-08-13 08:00,2012-08-27 17:00,,PT_Normal,,,,,U3yxu73TrEe6VkDMbpxbug,,,,Y,0,0,,,2012-04-22 09:40,2012-04-22 10:21,admin,admin
6,120015,3211,18157,794,1,0,N,N,N,CP_Drtn,TT_Task,DT_FixedDUR2,RV_OK,TK_NotStart,BA-P1-160,P.C SOG,,568,0,120,0,0,0,120,0,0,0,,,,2013-02-09 08:00,2013-02-23 17:00,,2012-11-30 08:00,2012-12-14 17:00,2012-11-30 08:00,2012-12-14 17:00,2012-11-30 08:00,2012-12-14 17:00,,2013-02-09 08:00,2013-02-23 17:00,,PT_Normal,,,,,KsF3eWeYUkOayAIt9XCMAQ,,,,N,0,0,,,2012-04-22 09:40,2012-04-22 10:21,admin,admin
7,120016,3211,18157,794,1,0,N,N,N,CP_Drtn,TT_Task,DT_FixedDUR2,RV_OK,TK_NotStart,BA-P1-60,Columns And Retaining Wall,,8,0,160,0,0,0,160,0,0,0,,,,2012-07-24 08:00,2012-08-12 17:00,,2012-07-23 08:00,2012-08-11 17:00,2012-07-23 08:00,2012-08-11 17:00,2012-07-23 08:00,2012-08-11 17:00,,2012-07-24 08:00,2012-08-12 17:00,,PT_Normal,,,,,hawS1jxs80qAcUU/jxYlHA,,,,Y,0,0,,,2012-04-22 09:40,2012-04-22 10:21,admin,admin
8,120017,3211,18146,794,1,0,N,N,N,CP_Drtn,TT_Task,DT_FixedDUR2,RV_OK,TK_NotStart,BA-P1-20,Excavation  till Level  (+3),,16,0,240,0,0,0,240,0,0,0,,,,2012-05-03 08:00,2012-06-01 17:00,,2012-05-01 08:00,2012-05-30 17:00,2012-05-01 08:00,2012-05-30 17:00,2012-05-01 08:00,2012-05-30 17:00,,2012-05-03 08:00,2012-06-01 17:00,,PT_Normal,,,,,gwnjzwawUEu+tS6lNn7V4Q,zWld8FrnEU6QJXaZ2NrJjQ,,,N,0,0,,,2012-04-22 09:40,2012-04-22 10:21,admin,admin
9,120018,3211,18146,794,1,0,N,N,N,CP_Drtn,TT_Task,DT_FixedDUR2,RV_OK,TK_NotStart,BA-P1-90,P.C For Footings,,8,0,200,0,0,0,200,0,0,0,,,,2012-09-02 08:00,2012-09-26 17:00,,2012-09-01 08:00,2012-09-25 17:00,2012-09-01 08:00,2012-09-25 17:00,2012-09-01 08:00,2012-09-25 17:00,,2012-09-02 08:00,2012-09-26 17:00,,PT_Normal,,,,,YcEMgIFho0avw5RyWNVDUw,pqfmu/7qdUGFvsdZll/XUQ,,,Y,0,0,,,2012-04-22 09:40,2012-04-22 10:21,admin,admin
10,120019,3211,18146,794,1,0,N,N,N,CP_Drtn,TT_Task,DT_FixedDUR2,RV_OK,TK_NotStart,BA-P1-100,R.C For Footings,,8,0,200,0,0,0,200,0,0,0,,,,2012-09-12 08:00,2012-10-06 17:00,,2012-09-11 08:00,2012-10-05 17:00,2012-09-11 08:00,2012-10-05 17:00,2012-09-11 08:00,2012-10-05 17:00,,2012-09-12 08:00,2012-10-06 17:00,,PT_Normal,,,,,QjrA1iKVKEiuLGLK+QdUTA,grf+TzQ9PkmlrqLTflR22g,,,Y,0,0,,,2012-04-22 09:40,2012-04-22 10:21,admin,admin
11,120020,3211,18143,794,1,0,N,N,N,CP_Drtn,TT_Task,DT_FixedDUR2,RV_OK,TK_NotStart,BA-P1-80,Backfill Works Till (+3),,8,0,160,0,0,0,160,0,0,0,,,,2012-08-28 08:00,2012-09-16 17:00,,2012-08-27 08:00,2012-09-15 17:00,2012-08-27 08:00,2012-09-15 17:00,2012-08-27 08:00,2012-09-15 17:00,,2012-08-28 08:00,2012-09-16 17:00,,PT_Normal,,,,,MC1qj6fVRkqgRMMWPPcHdQ,/7pvr3gvUkiFdfdwW9PGAw,,,Y,0,0,,,2012-04-22 09:40,2012-04-22 10:21,admin,admin
12,120021,3211,18157,794,1,0,N,N,N,CP_Drtn,TT_Task,DT_FixedDUR2,RV_OK,TK_NotStart,BA-P1-110,Columns,,8,0,160,0,0,0,160,0,0,0,,,,2012-09-22 08:00,2012-10-11 17:00,,2012-09-21 08:00,2012-10-10 17:00,2012-09-21 08:00,2012-10-10 17:00,2012-09-21 08:00,2012-10-10 17:00,,2012-09-22 08:00,2012-10-11 17:00,,PT_Normal,,,,,LAWe0I6qPUe8rQ4n9JQ7qw,OG7ozpqxTU+4ZJnl4C0V3g,,,Y,0,0,,,2012-04-22 09:40,2012-04-22 10:21,admin,admin
13,120022,3211,18137,794,1,0,N,N,N,CP_Drtn,TT_Task,DT_FixedDUR2,RV_OK,TK_NotStart,BA-P2-10,Excavation  till Level  (-1.4),,8,0,240,0,0,0,240,0,0,0,,,,2012-05-25 08:00,2012-06-23 17:00,,2012-05-24 08:00,2012-06-22 17:00,2012-05-24 08:00,2012-06-22 17:00,2012-05-24 08:00,2012-06-22 17:00,,2012-05-25 08:00,2012-06-23 17:00,,PT_Normal,,,,,3DIerSnE70aoQr+EaTbRog,zWld8FrnEU6QJXaZ2NrJjQ,,,Y,0,0,,,2012-04-22 09:40,2012-04-22 10:21,admin,admin
14,120023,3211,18137,794,1,0,N,N,N,CP_Drtn,TT_Task,DT_FixedDUR2,RV_OK,TK_NotStart,BA-P2-20,Piles Work,,208,0,320,0,0,0,320,0,0,0,,,,2012-07-19 08:00,2012-08-27 17:00,,2012-06-23 08:00,2012-08-01 17:00,2012-06-23 08:00,2012-08-01 17:00,2012-06-23 08:00,2012-08-01 17:00,,2012-07-19 08:00,2012-08-27 17:00,,PT_Normal,,,,,nB30bBtiGkOWWOXuNW66wQ,tNR7MflOck6M+qCrJ5oDRQ,,,N,0,0,,,2012-04-22 09:40,2012-04-22 10:21,admin,admin
15,120024,3211,18137,794,1,0,N,N,N,CP_Drtn,TT_Task,DT_FixedDUR2,RV_OK,TK_NotStart,BA-P2-30,P.C For Footings,,208,0,160,0,0,0,160,0,0,0,,,,2012-08-28 08:00,2012-09-16 17:00,,2012-08-02 08:00,2012-08-21 17:00,2012-08-02 08:00,2012-08-21 17:00,2012-08-02 08:00,2012-08-21 17:00,,2012-08-28 08:00,2012-09-16 17:00,,PT_Normal,,,,,ZdRhoinZKUea8x54E64Fag,pqfmu/7qdUGFvsdZll/XUQ,,,N,0,0,,,2012-04-22 09:40,2012-04-22 10:21,admin,admin
16,120025,3211,18137,794,1,0,N,N,N,CP_Drtn,TT_Task,DT_FixedDUR2,RV_OK,TK_NotStart,BA-P2-40,R.C For Footings,,208,0,160,0,0,0,160,0,0,0,,,,2012-09-07 08:00,2012-09-26 17:00,,2012-08-12 08:00,2012-08-31 17:00,2012-08-12 08:00,2012-08-31 17:00,2012-08-12 08:00,2012-08-31 17:00,,2012-09-07 08:00,2012-09-26 17:00,,PT_Normal,,,,,RZlNPFZYkkuOxEP4CfHQLw,grf+TzQ9PkmlrqLTflR22g,,,N,0,0,,,2012-04-22 09:40,2012-04-22 10:21,admin,admin
17,120026,3211,18137,794,1,0,N,N,N,CP_Drtn,TT_Task,DT_FixedDUR2,RV_OK,TK_NotStart,BA-P2-60,Insulation Works,,208,200,80,0,0,0,80,0,0,0,,,,2012-10-12 08:00,2012-10-21 17:00,,2012-09-16 08:00,2012-09-25 17:00,2012-09-16 08:00,2012-09-25 17:00,2012-09-16 08:00,2012-09-25 17:00,,2012-10-12 08:00,2012-10-21 17:00,,PT_Normal,,,,,lku82PswwUCK1Or9Iwkgsg,8RWUm2K7/0SIca1O7gWdeg,,,N,0,0,,,2012-04-22 09:40,2012-04-22 10:21,admin,admin
18,120027,3211,18134,794,1,0,N,N,N,CP_Drtn,TT_Task,DT_FixedDUR2,RV_OK,TK_NotStart,BA-P2-100,P.C SOG,,472,0,120,0,0,0,120,0,0,0,,,,2013-02-07 08:00,2013-02-21 17:00,,2012-12-10 08:00,2012-12-24 17:00,2012-12-10 08:00,2012-12-24 17:00,2012-12-10 08:00,2012-12-24 17:00,,2013-02-07 08:00,2013-02-21 17:00,,PT_Normal,,,,,DRljlU8+dU2Ei3fhcZcUqQ,jAY11BPKQUOm4Wmg45gfdw,,,N,0,0,,,2012-04-22 09:40,2012-04-22 10:21,admin,admin
19,120028,3211,18134,794,1,0,N,N,N,CP_Drtn,TT_Task,DT_FixedDUR2,RV_OK,TK_NotStart,BA-P2-50,Columns And Retaining Wall,,208,0,120,0,0,0,120,0,0,0,,,,2012-09-27 08:00,2012-10-11 17:00,,2012-09-01 08:00,2012-09-15 17:00,2012-09-01 08:00,2012-09-15 17:00,2012-09-01 08:00,2012-09-15 17:00,,2012-09-27 08:00,2012-10-11 17:00,,PT_Normal,,,,,jIa3FzzkhU+L1Hhjz99DZg,OG7ozpqxTU+4ZJnl4C0V3g,,,N,0,0,,,2012-04-22 09:40,2012-04-22 10:21,admin,admin
20,120029,3211,18134,794,1,0,N,N,N,CP_Drtn,TT_Task,DT_FixedDUR2,RV_OK,TK_NotStart,BA-P2-80,RC Deck Floor,,8,0,120,0,0,0,120,0,0,0,,,,2012-11-11 08:00,2012-11-25 17:00,,2012-11-10 08:00,2012-11-24 17:00,2012-11-10 08:00,2012-11-24 17:00,2012-11-10 08:00,2012-11-24 17:00,,2012-11-11 08:00,2012-11-25 17:00,,PT_Normal,,,,,w/XeM1MV8k+mXpP/wJ5zBQ,1MV0pTN/xU2UZ6LpHWlLEg,,,Y,0,0,,,2012-04-22 09:40,2012-04-22 10:21,admin,admin
21,120030,3211,18137,794,1,0,N,N,N,CP_Drtn,TT_Task,DT_FixedDUR2,RV_OK,TK_NotStart,BA-P2-70,Backfill Works,,8,0,80,0,0,0,80,0,0,0,,,,2012-10-22 08:00,2012-10-31 17:00,,2012-10-21 08:00,2012-10-30 17:00,2012-10-21 08:00,2012-10-30 17:00,2012-10-21 08:00,2012-10-30 17:00,,2012-10-22 08:00,2012-10-31 17:00,,PT_Normal,,,,,b5qUsayl+U2WautZ+CLq7g,cNXtCRPjz0SSah6eiXvuwA,,,Y,0,0,,,2012-04-22 09:40,2012-04-22 10:21,admin,admin
22,120031,3211,18138,794,1,0,N,N,N,CP_Drtn,TT_Task,DT_FixedDUR2,RV_OK,TK_NotStart,BA-P2-90,Columns And Retaining Wall,,8,0,200,0,0,0,200,0,0,0,,,,2012-11-26 08:00,2012-12-20 17:00,,2012-11-25 08:00,2012-12-19 17:00,2012-11-25 08:00,2012-12-19 17:00,2012-11-25 08:00,2012-12-19 17:00,,2012-11-26 08:00,2012-12-20 17:00,,PT_Normal,,,,,zjM6Rwm0fUCXPzmK1z9L2A,i969KtLN10a3Uu5Hr8Nq4A,,,Y,0,0,,,2012-04-22 09:40,2012-04-22 10:21,admin,admin
23,120032,3211,18139,794,1,0,N,N,N,CP_Drtn,TT_Task,DT_FixedDUR2,RV_OK,TK_NotStart,BA-P2-140,Columns,,8,0,120,0,0,0,120,0,0,0,,,,2013-01-25 08:00,2013-02-08 17:00,,2013-01-24 08:00,2013-02-07 17:00,2013-01-24 08:00,2013-02-07 17:00,2013-01-24 08:00,2013-02-07 17:00,,2013-01-25 08:00,2013-02-08 17:00,,PT_Normal,,,,,ENrsUNsbZk++TE5RD9mEJg,as3AbmDqaEysm+QEANPCLw,,,Y,0,0,,,2012-04-22 09:40,2012-04-22 10:21,admin,admin
24,120033,3211,18142,794,1,0,N,N,N,CP_Drtn,TT_Task,DT_FixedDUR2,RV_OK,TK_NotStart,BA-P3-10,Excavation  till Level  (+3),,16,0,240,0,0,0,240,0,0,0,,,,2012-06-02 08:00,2012-07-01 17:00,,2012-05-31 08:00,2012-06-29 17:00,2012-05-31 08:00,2012-06-29 17:00,2012-05-31 08:00,2012-06-29 17:00,,2012-06-02 08:00,2012-07-01 17:00,,PT_Normal,,,,,8AoKcD1X/U2elBA8blLKew,zWld8FrnEU6QJXaZ2NrJjQ,,,N,0,0,,,2012-04-22 09:40,2012-04-22 10:21,admin,admin
25,120034,3211,18142,794,1,0,N,N,N,CP_Drtn,TT_Task,DT_FixedDUR2,RV_OK,TK_NotStart,BA-P3-20,P.C For Footings,,16,0,120,0,0,0,120,0,0,0,,,,2012-07-16 08:00,2012-07-30 17:00,,2012-07-14 08:00,2012-07-28 17:00,2012-07-14 08:00,2012-07-28 17:00,2012-07-14 08:00,2012-07-28 17:00,,2012-07-16 08:00,2012-07-30 17:00,,PT_Normal,,,,,x3tDWOayoUOcF3WrZ4aOig,pqfmu/7qdUGFvsdZll/XUQ,,,N,0,0,,,2012-04-22 09:40,2012-04-22 10:21,admin,admin
26,120035,3211,18142,794,1,0,N,N,N,CP_Drtn,TT_Task,DT_FixedDUR2,RV_OK,TK_NotStart,BA-P3-30,R.C For Footings,,16,0,144,0,0,0,144,0,0,0,,,,2012-07-31 08:00,2012-08-17 17:00,,2012-07-29 08:00,2012-08-15 17:00,2012-07-29 08:00,2012-08-15 17:00,2012-07-29 08:00,2012-08-15 17:00,,2012-07-31 08:00,2012-08-17 17:00,,PT_Normal,,,,,n9LXWlaveEiiGsZhtuYaeA,grf+TzQ9PkmlrqLTflR22g,,,N,0,0,,,2012-04-22 09:40,2012-04-22 10:21,admin,admin
27,120036,3211,18142,794,1,0,N,N,N,CP_Drtn,TT_Task,DT_FixedDUR2,RV_OK,TK_NotStart,BA-P3-50,Insulation Works,,16,0,120,0,0,0,120,0,0,0,,,,2012-09-12 08:00,2012-09-26 17:00,,2012-09-10 08:00,2012-09-24 17:00,2012-09-10 08:00,2012-09-24 17:00,2012-09-10 08:00,2012-09-24 17:00,,2012-09-12 08:00,2012-09-26 17:00,,PT_Normal,,,,,5jAtSFRftkedztZK8SyRyQ,8RWUm2K7/0SIca1O7gWdeg,,,N,0,0,,,2012-04-22 09:40,2012-04-22 10:21,admin,admin
28,120037,3211,18140,794,1,0,N,N,N,CP_Drtn,TT_Task,DT_FixedDUR2,RV_OK,TK_NotStart,BA-P3-100,P.C SOG,,616,0,120,0,0,0,120,0,0,0,,,,2013-02-09 08:00,2013-02-23 17:00,,2012-11-24 08:00,2012-12-08 17:00,2012-11-24 08:00,2012-12-08 17:00,2012-11-24 08:00,2012-12-08 17:00,,2013-02-09 08:00,2013-02-23 17:00,,PT_Normal,,,,,qmTVTM1Ad0+V6AGcRBR+0g,jAY11BPKQUOm4Wmg45gfdw,,,N,0,0,,,2012-04-22 09:40,2012-04-22 10:21,admin,admin
29,120038,3211,18140,794,1,0,N,N,N,CP_Drtn,TT_Task,DT_FixedDUR2,RV_OK,TK_NotStart,BA-P3-40,Columns And Retaining Wall,,16,0,200,0,0,0,200,0,0,0,,,,2012-08-18 08:00,2012-09-11 17:00,,2012-08-16 08:00,2012-09-09 17:00,2012-08-16 08:00,2012-09-09 17:00,2012-08-16 08:00,2012-09-09 17:00,,2012-08-18 08:00,2012-09-11 17:00,,PT_Normal,,,,,4D7MWg6YxU+pixaovDqVSA,OG7ozpqxTU+4ZJnl4C0V3g,,,N,0,0,,,2012-04-22 09:40,2012-04-22 10:21,admin,admin
30,120039,3211,18140,794,1,0,N,N,N,CP_Drtn,TT_Task,DT_FixedDUR2,RV_OK,TK_NotStart,BA-P3-70,Slab Works,,16,0,240,0,0,0,240,0,0,0,,,,2012-10-12 08:00,2012-11-10 17:00,,2012-10-10 08:00,2012-11-08 17:00,2012-10-10 08:00,2012-11-08 17:00,2012-10-10 08:00,2012-11-08 17:00,,2012-10-12 08:00,2012-11-10 17:00,,PT_Normal,,,,,wfP78XmuxEusk21OE1M8gw,1MV0pTN/xU2UZ6LpHWlLEg,,,N,0,0,,,2012-04-22 09:40,2012-04-22 10:21,admin,admin
31,120040,3211,18142,794,1,0,N,N,N,CP_Drtn,TT_Task,DT_FixedDUR2,RV_OK,TK_NotStart,BA-P3-60,Backfill Works,,16,0,120,0,0,0,120,0,0,0,,,,2012-09-27 08:00,2012-10-11 17:00,,2012-09-25 08:00,2012-10-09 17:00,2012-09-25 08:00,2012-10-09 17:00,2012-09-25 08:00,2012-10-09 17:00,,2012-09-27 08:00,2012-10-11 17:00,,PT_Normal,,,,,Fx96jDu+skOAUHukj/pJUA,cNXtCRPjz0SSah6eiXvuwA,,,N,0,0,,,2012-04-22 09:40,2012-04-22 10:21,admin,admin
32,120041,3211,18141,794,1,0,N,N,N,CP_Drtn,TT_Task,DT_FixedDUR2,RV_OK,TK_NotStart,BA-P3-90,Columns,,16,0,160,0,0,0,160,0,0,0,,,,2012-11-14 08:00,2012-12-03 17:00,,2012-11-12 08:00,2012-12-01 17:00,2012-11-12 08:00,2012-12-01 17:00,2012-11-12 08:00,2012-12-01 17:00,,2012-11-14 08:00,2012-12-03 17:00,,PT_Normal,,,,,ciD2AjfrekuTUgA9u8RF4Q,A5s6aX9sVUCCCPEJw7zX7A,,,N,0,0,,,2012-04-22 09:40,2012-04-22 10:21,admin,admin
33,120042,3211,18141,794,1,0,N,N,N,CP_Drtn,TT_Task,DT_FixedDUR2,RV_OK,TK_NotStart,BA-P3-120,Slab Works,,16,0,240,0,0,0,240,0,0,0,,,,2012-12-06 08:00,2013-01-04 17:00,,2012-12-04 08:00,2013-01-02 17:00,2012-12-04 08:00,2013-01-02 17:00,2012-12-04 08:00,2013-01-02 17:00,,2012-12-06 08:00,2013-01-04 17:00,,PT_Normal,,,,,GOCFW82mGk+lBLVxX8dWjw,AMaKq91j4kONhZhMuB+CyA,,,N,0,0,,,2012-04-22 09:40,2012-04-22 10:21,admin,admin
34,120043,3211,18162,794,1,0,N,N,N,CP_Drtn,TT_Task,DT_FixedDUR2,RV_OK,TK_NotStart,BA-P3-130,Columns,,16,0,160,0,0,0,160,0,0,0,,,,2013-01-08 08:00,2013-01-27 17:00,,2013-01-06 08:00,2013-01-25 17:00,2013-01-06 08:00,2013-01-25 17:00,2013-01-06 08:00,2013-01-25 17:00,,2013-01-08 08:00,2013-01-27 17:00,,PT_Normal,,,,,cjlWSbB3TE2DgAN/YTaFWw,r8gL8YqLZ0uUpSRggp/eHg,,,N,0,0,,,2012-04-22 09:40,2012-04-22 10:21,admin,admin
35,120044,3211,18162,794,1,0,N,N,N,CP_Drtn,TT_Task,DT_FixedDUR2,RV_OK,TK_NotStart,BA-P3-140,Slab Works,,16,8,240,0,0,0,240,0,0,0,,,,2013-01-30 08:00,2013-02-28 17:00,,2013-01-28 08:00,2013-02-26 17:00,2013-01-28 08:00,2013-02-26 17:00,2013-01-28 08:00,2013-02-26 17:00,,2013-01-30 08:00,2013-02-28 17:00,,PT_Normal,,,,,/89Ay5AdqEa7MtBWbohoqw,tKqKVXOM5EWcux1kvo3pqg,,,N,0,0,,,2012-04-22 09:40,2012-04-22 10:21,admin,admin
36,120045,3211,18152,794,1,0,N,N,N,CP_Drtn,TT_Task,DT_FixedDUR2,RV_OK,TK_NotStart,BA-P4-10,Excavation  till Level  (-1.4),,8,0,160,0,0,0,160,0,0,0,,,,2012-06-24 08:00,2012-07-13 17:00,,2012-06-23 08:00,2012-07-12 17:00,2012-06-23 08:00,2012-07-12 17:00,2012-06-23 08:00,2012-07-12 17:00,,2012-06-24 08:00,2012-07-13 17:00,,PT_Normal,,,,,tHd0BD3cFkaqVwZoYZzR5A,r/cfiGIDcUmNXei3sBDH4A,,,Y,0,0,,,2012-04-22 09:40,2012-04-22 10:21,admin,admin
37,120046,3211,18152,794,1,0,N,N,N,CP_Drtn,TT_Task,DT_FixedDUR2,RV_OK,TK_NotStart,BA-P4-20,P.C For Footings,,8,0,120,0,0,0,120,0,0,0,,,,2012-07-14 08:00,2012-07-28 17:00,,2012-07-13 08:00,2012-07-27 17:00,2012-07-13 08:00,2012-07-27 17:00,2012-07-13 08:00,2012-07-27 17:00,,2012-07-14 08:00,2012-07-28 17:00,,PT_Normal,,,,,LGNzJyPit0iIe/lv4i5pWA,Y6AApWBgr067HSlZvAdlxg,,,Y,0,0,,,2012-04-22 09:40,2012-04-22 10:21,admin,admin
38,120047,3211,18152,794,1,0,N,N,N,CP_Drtn,TT_Task,DT_FixedDUR2,RV_OK,TK_NotStart,BA-P4-30,R.C For Footings,,8,0,160,0,0,0,160,0,0,0,,,,2012-07-24 08:00,2012-08-12 17:00,,2012-07-23 08:00,2012-08-11 17:00,2012-07-23 08:00,2012-08-11 17:00,2012-07-23 08:00,2012-08-11 17:00,,2012-07-24 08:00,2012-08-12 17:00,,PT_Normal,,,,,qP7cW7b+N0WyG2+8LM+lLw,BTFLMB43TUe7Ce5hNX3ikA,,,Y,0,0,,,2012-04-22 09:40,2012-04-22 10:21,admin,admin
39,120048,3211,18152,794,1,0,N,N,N,CP_Drtn,TT_Task,DT_FixedDUR2,RV_OK,TK_NotStart,BA-P4-50,Insulation Works,,8,0,80,0,0,0,80,0,0,0,,,,2012-08-28 08:00,2012-09-06 17:00,,2012-08-27 08:00,2012-09-05 17:00,2012-08-27 08:00,2012-09-05 17:00,2012-08-27 08:00,2012-09-05 17:00,,2012-08-28 08:00,2012-09-06 17:00,,PT_Normal,,,,,h1T4zJgHqUu3iw//o3Kzpw,xRQ1fQlqh0O/2KLBB1xpgw,,,Y,0,0,,,2012-04-22 09:40,2012-04-22 10:21,admin,admin
40,120049,3211,18176,794,1,0,N,N,N,CP_Drtn,TT_Task,DT_FixedDUR2,RV_OK,TK_NotStart,BA-P4-90,P.C SOG,,856,0,120,0,0,0,120,0,0,0,,,,2013-02-07 08:00,2013-02-21 17:00,,2012-10-23 08:00,2012-11-06 17:00,2012-10-23 08:00,2012-11-06 17:00,2012-10-23 08:00,2012-11-06 17:00,,2013-02-07 08:00,2013-02-21 17:00,,PT_Normal,,,,,/jAN9YQKAk6Pr9tnu2HtFQ,QSUweuktNEaWVQgG/cZG4w,,,N,0,0,,,2012-04-22 09:40,2012-04-22 10:21,admin,admin
41,120050,3211,18176,794,1,0,N,N,N,CP_Drtn,TT_Task,DT_FixedDUR2,RV_OK,TK_NotStart,BA-P4-40,Columns And Retaining Wall,,8,0,120,0,0,0,120,0,0,0,,,,2012-08-13 08:00,2012-08-27 17:00,,2012-08-12 08:00,2012-08-26 17:00,2012-08-12 08:00,2012-08-26 17:00,2012-08-12 08:00,2012-08-26 17:00,,2012-08-13 08:00,2012-08-27 17:00,,PT_Normal,,,,,nvA1nZ++1EKtAOayctfycQ,i969KtLN10a3Uu5Hr8Nq4A,,,Y,0,0,,,2012-04-22 09:40,2012-04-22 10:21,admin,admin
42,120051,3211,18176,794,1,0,N,N,N,CP_Drtn,TT_Task,DT_FixedDUR2,RV_OK,TK_NotStart,BA-P4-70,RC Deck Floor,,8,0,160,0,0,0,160,0,0,0,,,,2012-09-19 08:00,2012-10-08 17:00,,2012-09-18 08:00,2012-10-07 17:00,2012-09-18 08:00,2012-10-07 17:00,2012-09-18 08:00,2012-10-07 17:00,,2012-09-19 08:00,2012-10-08 17:00,,PT_Normal,,,,,P3Ufno0uMUqrUJO+sNE46w,iTl2R1Vu/0aPDiQjI+bg5A,,,Y,0,0,,,2012-04-22 09:40,2012-04-22 10:21,admin,admin
43,120052,3211,18152,794,1,0,N,N,N,CP_Drtn,TT_Task,DT_FixedDUR2,RV_OK,TK_NotStart,BA-P4-60,Backfill Works,,8,0,96,0,0,0,96,0,0,0,,,,2012-09-07 08:00,2012-09-18 17:00,,2012-09-06 08:00,2012-09-17 17:00,2012-09-06 08:00,2012-09-17 17:00,2012-09-06 08:00,2012-09-17 17:00,,2012-09-07 08:00,2012-09-18 17:00,,PT_Normal,,,,,RMO3K5T+q0m1NI5sI9aqag,z/6MHoRUwUmie44r6oFGTw,,,Y,0,0,,,2012-04-22 09:40,2012-04-22 10:21,admin,admin
44,120053,3211,18158,794,1,0,N,N,N,CP_Drtn,TT_Task,DT_FixedDUR2,RV_OK,TK_NotStart,BA-P4-80,Columns,,8,0,160,0,0,0,160,0,0,0,,,,2012-10-09 08:00,2012-10-28 17:00,,2012-10-08 08:00,2012-10-27 17:00,2012-10-08 08:00,2012-10-27 17:00,2012-10-08 08:00,2012-10-27 17:00,,2012-10-09 08:00,2012-10-28 17:00,,PT_Normal,,,,,Y/SrmfKY+EW86aM03tXGzw,as3AbmDqaEysm+QEANPCLw,,,Y,0,0,,,2012-04-22 09:40,2012-04-22 10:21,admin,admin
45,120054,3211,18147,794,1,0,N,N,N,CP_Drtn,TT_Task,DT_FixedDUR2,RV_OK,TK_NotStart,BA-P4-130,Columns,,8,0,144,0,0,0,144,0,0,0,,,,2012-12-13 08:00,2012-12-30 17:00,,2012-12-12 08:00,2012-12-29 17:00,2012-12-12 08:00,2012-12-29 17:00,2012-12-12 08:00,2012-12-29 17:00,,2012-12-13 08:00,2012-12-30 17:00,,PT_Normal,,,,,uH8yK5YjYEes/wC2gd7sag,A5s6aX9sVUCCCPEJw7zX7A,,,Y,0,0,,,2012-04-22 09:40,2012-04-22 10:21,admin,admin
46,120055,3211,18147,794,1,0,N,N,N,CP_Drtn,TT_Task,DT_FixedDUR2,RV_OK,TK_NotStart,BA-P4-140,Slab Works,,8,0,200,0,0,0,200,0,0,0,,,,2012-12-31 08:00,2013-01-24 17:00,,2012-12-30 08:00,2013-01-23 17:00,2012-12-30 08:00,2013-01-23 17:00,2012-12-30 08:00,2013-01-23 17:00,,2012-12-31 08:00,2013-01-24 17:00,,PT_Normal,,,,,6kHdMt4DcEuyWth/u9kcpA,AMaKq91j4kONhZhMuB+CyA,,,Y,0,0,,,2012-04-22 09:40,2012-04-22 10:21,admin,admin
47,120056,3211,18144,794,1,0,N,N,N,CP_Drtn,TT_Task,DT_FixedDUR2,RV_OK,TK_NotStart,BA-P4-160,Columns,,8,0,120,0,0,0,120,0,0,0,,,,2013-01-25 08:00,2013-02-08 17:00,,2013-01-24 08:00,2013-02-07 17:00,2013-01-24 08:00,2013-02-07 17:00,2013-01-24 08:00,2013-02-07 17:00,,2013-01-25 08:00,2013-02-08 17:00,,PT_Normal,,,,,Qn6NLT7wLUCN063Bfz9b1A,l0WzfuBFXUSBl1kcdBRr6Q,,,Y,0,0,,,2012-04-22 09:40,2012-04-22 10:21,admin,admin
48,120057,3211,18144,794,1,0,N,N,N,CP_Drtn,TT_Task,DT_FixedDUR2,RV_OK,TK_NotStart,BA-P4-170,Slab Works,,8,0,160,0,0,0,160,0,0,0,,,,2013-02-09 08:00,2013-02-28 17:00,,2013-02-08 08:00,2013-02-27 17:00,2013-02-08 08:00,2013-02-27 17:00,2013-02-08 08:00,2013-02-27 17:00,,2013-02-09 08:00,2013-02-28 17:00,,PT_Normal,,,,,wth/fLbA/0C7Si6qAnPmzg,cqNPw/kckEictDameo1VvA,,,Y,0,0,,,2012-04-22 09:40,2012-04-22 10:21,admin,admin
49,120058,3211,18120,794,0,0,N,N,N,CP_Drtn,TT_FinMile,DT_FixedDrtn,RV_OK,TK_NotStart,A3450,Building A Finish,,8,0,0,0,0,0,0,0,0,0,,,,2013-02-28 17:00,2013-02-28 17:00,,2013-02-27 17:00,2013-02-27 17:00,2013-02-27 17:00,2013-02-27 17:00,2013-02-27 17:00,2013-02-27 17:00,,2013-02-28 17:00,2013-02-28 17:00,,PT_Normal,,,,,cMwOlwwJ5Eiz7nJOpbmMYA,,,,Y,0,0,,,2012-04-22 09:40,2012-04-22 10:21,admin,admin
50,120060,3211,18143,794,1,0,N,N,N,CP_Drtn,TT_Task,DT_FixedDUR2,RV_OK,TK_NotStart,BA-P1-130,Final Backfill Works,,8,0,40,0,0,0,40,0,0,0,,,,2012-10-17 08:00,2012-10-21 17:00,,2012-10-16 08:00,2012-10-20 17:00,2012-10-16 08:00,2012-10-20 17:00,2012-10-16 08:00,2012-10-20 17:00,,2012-10-17 08:00,2012-10-21 17:00,,PT_Normal,,,,,GwSr8zX1mkOKCv7t+PZ6zQ,,,,Y,0,0,,,2012-04-22 09:40,2012-04-22 10:21,admin,admin
51,120061,3211,18143,794,1,0,N,N,N,CP_Drtn,TT_Task,DT_FixedDUR2,RV_OK,TK_NotStart,BA-P1-120,Insulation Works For R.C Footings (+3),,8,0,40,0,0,0,40,0,0,0,,,,2012-10-12 08:00,2012-10-16 17:00,,2012-10-11 08:00,2012-10-15 17:00,2012-10-11 08:00,2012-10-15 17:00,2012-10-11 08:00,2012-10-15 17:00,,2012-10-12 08:00,2012-10-16 17:00,,PT_Normal,,,,,MZE9i8SzsUyS8Ohe+8C1Zw,,,,Y,0,0,,,2012-04-22 09:40,2012-04-22 10:21,admin,admin
52,120138,3211,18115,794,0,0,N,N,N,CP_Drtn,TT_FinMile,DT_FixedDrtn,RV_OK,TK_NotStart,A5800,Project End,,8,0,0,0,0,0,0,0,0,0,,,,2013-02-28 17:00,2013-02-28 17:00,,2013-02-27 17:00,2013-02-27 17:00,2013-02-27 17:00,2013-02-27 17:00,2013-02-27 17:00,2013-02-27 17:00,,2013-02-28 17:00,2013-02-28 17:00,,PT_Normal,,,,,QiKqWAFYEEOTLZF26xbiiA,,,,Y,0,0,,,2012-04-22 09:40,2012-04-22 10:21,admin,admin
53,120139,3211,18157,794,1,0,N,N,N,CP_Drtn,TT_Task,DT_FixedDUR2,RV_OK,TK_NotStart,BA-P1-170,R.C SOG,,568,560,120,0,0,0,120,0,0,0,,,,2013-02-14 08:00,2013-02-28 17:00,,2012-12-05 08:00,2012-12-19 17:00,2012-12-05 08:00,2012-12-19 17:00,2012-12-05 08:00,2012-12-19 17:00,,2013-02-14 08:00,2013-02-28 17:00,,PT_Normal,,,,,mEKogiqXOkCHvW2HdABzgQ,,,,N,0,0,,,2012-04-22 09:40,2012-04-22 10:21,admin,admin
54,120140,3211,18134,794,1,0,N,N,N,CP_Drtn,TT_Task,DT_FixedDUR2,RV_OK,TK_NotStart,BA-P2-110,R.C SOG,,472,464,120,0,0,0,120,0,0,0,,,,2013-02-14 08:00,2013-02-28 17:00,,2012-12-17 08:00,2012-12-31 17:00,2012-12-17 08:00,2012-12-31 17:00,2012-12-17 08:00,2012-12-31 17:00,,2013-02-14 08:00,2013-02-28 17:00,,PT_Normal,,,,,Q44ZCQC4MEW7iY6nXeTahA,,,,N,0,0,,,2012-04-22 09:40,2012-04-22 10:21,admin,admin
55,120141,3211,18140,794,1,0,N,N,N,CP_Drtn,TT_Task,DT_FixedDUR2,RV_OK,TK_NotStart,BA-P3-110,R.C SOG,,616,608,120,0,0,0,120,0,0,0,,,,2013-02-14 08:00,2013-02-28 17:00,,2012-11-29 08:00,2012-12-13 17:00,2012-11-29 08:00,2012-12-13 17:00,2012-11-29 08:00,2012-12-13 17:00,,2013-02-14 08:00,2013-02-28 17:00,,PT_Normal,,,,,oDyfZniAB0mVhvfysXng8A,,,,N,0,0,,,2012-04-22 09:40,2012-04-22 10:21,admin,admin
56,120142,3211,18176,794,1,0,N,N,N,CP_Drtn,TT_Task,DT_FixedDUR2,RV_OK,TK_NotStart,BA-P4-120,R.C SOG,,856,848,120,0,0,0,120,0,0,0,,,,2013-02-14 08:00,2013-02-28 17:00,,2012-10-30 08:00,2012-11-13 17:00,2012-10-30 08:00,2012-11-13 17:00,2012-10-30 08:00,2012-11-13 17:00,,2013-02-14 08:00,2013-02-28 17:00,,PT_Normal,,,,,42b7eJTTgkWcT2E/RiSu8w,,,,N,0,0,,,2012-04-22 09:40,2012-04-22 10:21,admin,admin
57,120144,3211,18157,794,1,0,N,N,N,CP_Drtn,TT_Task,DT_FixedDUR2,RV_OK,TK_NotStart,BA-P1-140,Hollow Core Slab Works,,544,0,200,0,0,0,200,0,0,0,,,,2012-12-28 08:00,2013-01-21 17:00,,2012-10-21 08:00,2012-11-14 17:00,2012-10-21 08:00,2012-11-14 17:00,2012-10-21 08:00,2012-11-14 17:00,,2012-12-28 08:00,2013-01-21 17:00,,PT_Normal,,,,,V6jMhLBNJkejE245ZGqnIQ,,,,N,0,0,,,2012-04-22 09:40,2012-04-22 10:21,admin,admin
58,120145,3211,18138,794,1,0,N,N,N,CP_Drtn,TT_Task,DT_FixedDUR2,RV_OK,TK_NotStart,BA-P2-120,Hollow Core Slab,,8,0,280,0,0,0,280,0,0,0,,,,2012-12-21 08:00,2013-01-24 17:00,,2012-12-20 08:00,2013-01-23 17:00,2012-12-20 08:00,2013-01-23 17:00,2012-12-20 08:00,2013-01-23 17:00,,2012-12-21 08:00,2013-01-24 17:00,,PT_Normal,,,,,tW5aCHt5aUeCajp6OFxPWg,,,,Y,0,0,,,2012-04-22 09:40,2012-04-22 10:21,admin,admin
59,120146,3211,18158,794,1,0,N,N,N,CP_Drtn,TT_Task,DT_FixedDUR2,RV_OK,TK_NotStart,BA-P4-100,Hollow Core Slab,,8,0,360,0,0,0,360,0,0,0,,,,2012-10-29 08:00,2012-12-12 17:00,,2012-10-28 08:00,2012-12-11 17:00,2012-10-28 08:00,2012-12-11 17:00,2012-10-28 08:00,2012-12-11 17:00,,2012-10-29 08:00,2012-12-12 17:00,,PT_Normal,,,,,wVqtfXkdzkWvrattfGYEfQ,,,,Y,0,0,,,2012-04-22 09:40,2012-04-22 10:21,admin,admin
60,120147,3211,18140,794,1,0,N,N,N,CP_Drtn,TT_Task,DT_FixedDUR2,RV_OK,TK_NotStart,BA-P3-80,Hollow Core Slab,,96,80,160,0,0,0,160,0,0,0,,,,2012-10-22 08:00,2012-11-10 17:00,,2012-10-10 08:00,2012-10-29 17:00,2012-10-10 08:00,2012-10-29 17:00,2012-10-10 08:00,2012-10-29 17:00,,2012-10-22 08:00,2012-11-10 17:00,,PT_Normal,,,,,J3GUhfsipEOb5O6/kuxqiA,,,,N,0,0,,,2012-04-22 09:40,2012-04-22 10:21,admin,admin
61,120148,3211,18139,794,1,0,N,N,N,CP_Drtn,TT_Task,DT_FixedDUR2,RV_OK,TK_NotStart,BA-P2-150,Hollow Core Slab,,8,0,160,0,0,0,160,0,0,0,,,,2013-02-09 08:00,2013-02-28 17:00,,2013-02-08 08:00,2013-02-27 17:00,2013-02-08 08:00,2013-02-27 17:00,2013-02-08 08:00,2013-02-27 17:00,,2013-02-09 08:00,2013-02-28 17:00,,PT_Normal,,,,,Yi+GTB4/oECdrX3tMYp4LA,,,,Y,0,0,,,2012-04-22 09:40,2012-04-22 10:21,admin,admin
62,120149,3211,18147,794,1,0,N,N,N,CP_Drtn,TT_Task,DT_FixedDUR2,RV_OK,TK_NotStart,BA-P4-150,Hollow Core Slab,,88,80,120,0,0,0,120,0,0,0,,,,2013-01-10 08:00,2013-01-24 17:00,,2012-12-30 08:00,2013-01-13 17:00,2012-12-30 08:00,2013-01-13 17:00,2012-12-30 08:00,2013-01-13 17:00,,2013-01-10 08:00,2013-01-24 17:00,,PT_Normal,,,,,U/wkHi5jJ0aGwhukTCTqqw,,,,N,0,0,,,2012-04-22 09:40,2012-04-22 10:21,admin,admin
63,120237,3211,18158,794,1,0,N,N,N,CP_Drtn,TT_Task,DT_FixedDUR2,RV_OK,TK_NotStart,BA-P4-110,Slab Works,,8,0,200,0,0,0,200,0,0,0,,,,2012-10-29 08:00,2012-11-22 17:00,,2012-10-28 08:00,2012-11-21 17:00,2012-10-28 08:00,2012-11-21 17:00,2012-10-28 08:00,2012-11-21 17:00,,2012-10-29 08:00,2012-11-22 17:00,,PT_Normal,,,,,4Ds7RRKQOkuNr92/Lfh6kA,,,,Y,0,0,,,2012-04-22 09:40,2012-04-22 10:21,admin,admin
64,120238,3211,18157,794,1,0,N,N,N,CP_Drtn,TT_Task,DT_FixedDUR2,RV_OK,TK_NotStart,BA-P1-150,LB Beams Works,,688,120,200,0,0,0,200,0,0,0,,,,2013-01-15 08:00,2013-02-08 17:00,,2012-10-21 08:00,2012-11-14 17:00,2012-10-21 08:00,2012-11-14 17:00,2012-10-21 08:00,2012-11-14 17:00,,2013-01-15 08:00,2013-02-08 17:00,,PT_Normal,,,,,EBX53X/sR0WhWxv8hyF7/Q,,,,N,0,0,,,2012-04-22 09:40,2012-04-22 10:21,admin,admin
65,120239,3211,18138,794,1,0,N,N,N,CP_Drtn,TT_Task,DT_FixedDUR2,RV_OK,TK_NotStart,BA-P2-130,LB Beams Works,,48,40,240,0,0,0,240,0,0,0,,,,2012-12-26 08:00,2013-01-24 17:00,,2012-12-20 08:00,2013-01-18 17:00,2012-12-20 08:00,2013-01-18 17:00,2012-12-20 08:00,2013-01-18 17:00,,2012-12-26 08:00,2013-01-24 17:00,,PT_Normal,,,,,Ukbb2I2r/kSZ/q3Fzw0r2A,EI/L0SPoIku6lpZOYlOxzw,,,N,0,0,,,2012-04-22 09:40,2012-04-22 10:21,admin,admin
