,task_id,proj_id,wbs_id,clndr_id,est_wt,phys_complete_pct,rev_fdbk_flag,lock_plan_flag,auto_compute_act_flag,complete_pct_type,task_type,duration_type,review_type,status_code,task_code,task_name,rsrc_id,total_float_hr_cnt,free_float_hr_cnt,remain_drtn_hr_cnt,act_work_qty,remain_work_qty,target_work_qty,target_drtn_hr_cnt,target_equip_qty,act_equip_qty,remain_equip_qty,cstr_date,act_start_date,act_end_date,late_start_date,late_end_date,expect_end_date,early_start_date,early_end_date,restart_date,reend_date,target_start_date,target_end_date,review_end_date,rem_late_start_date,rem_late_end_date,cstr_type,priority_type,suspend_date,resume_date,float_path,float_path_order,guid,tmpl_guid,cstr_date2,cstr_type2,driving_path_flag,act_this_per_work_qty,act_this_per_equip_qty,external_early_start_date,external_late_end_date,create_date,update_date,create_user,update_user,old_restart_date,old_reend_date,old_remain_drtn_hr_cnt
0,90588,794,11905,841,0,100,N,N,N,CP_Drtn,TT_Mile,DT_FixedDrtn,RV_OK,TK_Complete,A1000,Receiving IFC drawings,,,,0,0,0,0,0,0,0,0,,2010-07-07 08:00,2010-07-07 08:00,2010-09-01 08:00,2010-09-01 08:00,,2010-09-01 00:00,2010-09-01 00:00,,,2010-07-07 08:00,2010-07-07 08:00,,,,,PT_Normal,,,,,Fb0HMrjf7EqAOPGj7IdSOQ,,,,Y,0,0,,,2010-09-01 11:41,2010-09-04 11:48,admin,admin,,,
1,90589,794,11905,841,0,100,N,N,N,CP_Drtn,TT_Mile,DT_FixedDrtn,RV_OK,TK_Complete,A1010,Receiving advance payement,,,,0,0,0,0,0,0,0,0,,2010-07-07 08:00,2010-07-07 08:00,2010-09-01 08:00,2010-09-01 08:00,,2010-09-01 00:00,2010-09-01 00:00,,,2010-07-07 08:00,2010-07-07 08:00,,,,,PT_Normal,,,,,0F2c4KhMVkegRt3CzV94MQ,,,,Y,0,0,,,2010-09-01 11:41,2010-09-04 11:48,admin,admin,,,
2,90590,794,11905,841,0,100,N,N,N,CP_Drtn,TT_Mile,DT_FixedDrtn,RV_OK,TK_Complete,A1020,start construction phase,,,,0,0,0,0,0,0,0,0,,2010-07-10 00:00,2010-07-10 00:00,2010-09-01 08:00,2010-09-01 08:00,,2010-09-01 00:00,2010-09-01 00:00,,,2010-07-17 08:00,2010-07-17 08:00,,,,,PT_Normal,,,,,7Zas1x7J1kOh+iIggvBLug,,,,Y,0,0,,,2010-09-01 11:41,2010-09-04 11:48,admin,admin,,,
3,90591,794,11905,841,0,0,N,N,N,CP_Drtn,TT_FinMile,DT_FixedDrtn,RV_OK,TK_NotStart,A1030,finish construction,,0,0,0,0,0,0,0,0,0,0,,,,2011-03-31 16:00,2011-03-31 16:00,,2011-03-31 16:00,2011-03-31 16:00,2011-03-31 16:00,2011-03-31 16:00,2011-03-31 16:00,2011-03-31 16:00,,2011-03-31 16:00,2011-03-31 16:00,,PT_Normal,,,,,1mzvvCoxM0ar5of0FMYwpw,,,,Y,0,0,,,2010-09-01 11:41,2010-09-04 11:48,admin,admin,,,
4,90592,794,11908,841,1,100,N,N,N,CP_Drtn,TT_Task,DT_FixedDUR2,RV_OK,TK_Complete,A1330,columns Formwork & Rft. Part 2,,,,0,0,0,0,64,0,0,0,,2010-07-17 08:00,2010-07-27 00:00,2010-09-01 08:00,2010-09-01 08:00,,2010-09-01 00:00,2010-09-01 00:00,,,2010-07-17 08:00,2010-07-25 16:00,,,,,PT_Normal,,,,,V/Yn2i2680eNJCp4yjH0JQ,,,,Y,0,0,,,2010-09-01 11:41,2010-09-04 11:48,admin,admin,,,
5,90593,794,11908,841,1,100,N,N,N,CP_Drtn,TT_Task,DT_FixedDUR2,RV_OK,TK_Complete,A1340,Columns Pouring Part2,,,,0,0,0,0,8,0,0,0,,2010-07-28 00:00,2010-07-28 16:00,2010-09-01 08:00,2010-09-01 08:00,,2010-09-01 00:00,2010-09-01 00:00,,,2010-07-26 08:00,2010-07-26 16:00,,,,,PT_Normal,,,,,icE9moEslkK7ClRxF2booQ,,,,Y,0,0,,,2010-09-01 11:41,2010-09-04 11:48,admin,admin,,,
6,90594,794,11908,841,1,100,N,N,N,CP_Drtn,TT_Task,DT_FixedDUR2,RV_OK,TK_Complete,A1350,Slab Formwork & Rft. Part1,,,,0,0,0,0,80,0,0,0,,2010-07-10 00:00,2010-07-16 00:00,2010-09-01 08:00,2010-09-01 08:00,,2010-09-01 00:00,2010-09-01 00:00,,,2010-07-17 08:00,2010-07-27 16:00,,,,,PT_Normal,,,,,FQLKm23P/UKumhe/g06e7g,,,,Y,0,0,,,2010-09-01 11:41,2010-09-04 11:48,admin,admin,,,
7,90595,794,11908,841,1,100,N,N,N,CP_Drtn,TT_Task,DT_FixedDUR2,RV_OK,TK_Complete,A1370,Slab Formwork & Rft. Part2,,,,0,0,0,0,80,0,0,0,,2010-07-29 08:00,2010-08-05 00:00,2010-09-01 08:00,2010-09-01 08:00,,2010-09-01 00:00,2010-09-01 00:00,,,2010-07-29 08:00,2010-08-09 16:00,,,,,PT_Normal,,,,,aO7APNO6rEKzf2H7/Hb1Jg,,,,Y,0,0,,,2010-09-01 11:41,2010-09-04 11:48,admin,admin,,,
8,90596,794,11908,841,1,100,N,N,N,CP_Drtn,TT_Task,DT_FixedDUR2,RV_OK,TK_Complete,A1380,Slab Pouring,,,,0,0,0,0,8,0,0,0,,2010-08-07 00:00,2010-08-07 00:00,2010-09-01 08:00,2010-09-01 08:00,,2010-09-01 00:00,2010-09-01 00:00,,,2010-08-10 08:00,2010-08-10 16:00,,,,,PT_Normal,,,,,VeHX4oN6nkCrBAvBuUJC7g,,,,Y,0,0,,,2010-09-01 11:41,2010-09-04 11:48,admin,admin,,,
9,90597,794,11909,841,1,100,N,N,N,CP_Drtn,TT_Task,DT_FixedDUR2,RV_OK,TK_Complete,A1390,columns Formwork & Rft. Part1,,,,0,0,0,0,64,0,0,0,,2010-08-08 00:00,2010-08-24 00:00,2010-09-01 08:00,2010-09-01 08:00,,2010-09-01 00:00,2010-09-01 00:00,,,2010-08-12 08:00,2010-08-21 16:00,,,,,PT_Normal,,,,,ioUT9FRzWE+Ct1OZHbj72Q,aoAXnv9EYkKsSuO3clPmlw,,,Y,0,0,,,2010-09-01 11:41,2010-09-04 11:48,admin,admin,,,
10,90598,794,11909,841,1,100,N,N,N,CP_Drtn,TT_Task,DT_FixedDUR2,RV_OK,TK_Complete,A1400,Columns Pouring Part1,,,,0,0,0,0,8,0,0,0,,2010-08-25 00:00,2010-08-25 16:00,2010-09-01 08:00,2010-09-01 08:00,,2010-09-01 00:00,2010-09-01 00:00,,,2010-08-22 08:00,2010-08-22 16:00,,,,,PT_Normal,,,,,vDObOc3y6E66tAsw0ket7A,6Yuzhj7HgEaDUMY89kX9nQ,,,Y,0,0,,,2010-09-01 11:41,2010-09-04 11:48,admin,admin,,,
11,90599,794,11909,841,1,100,N,N,N,CP_Drtn,TT_Task,DT_FixedDUR2,RV_OK,TK_Complete,A1410,columns Formwork & Rft. Part 2,,,,0,0,0,0,64,0,0,0,,2010-08-22 08:00,2010-08-29 00:00,2010-09-04 08:00,2010-09-04 08:00,,2010-09-01 00:00,2010-09-01 00:00,,,2010-08-22 08:00,2010-08-30 16:00,,,,,PT_Normal,,,,,pMfZwd/6NkCQ7GAidH0egg,+upb8ujqUEWndAiJRa1e1g,,,N,0,0,,,2010-09-01 11:41,2010-09-04 11:48,admin,admin,,,
12,90600,794,11909,841,1,100,N,N,N,CP_Drtn,TT_Task,DT_FixedDUR2,RV_OK,TK_Complete,A1440,Columns Pouring Part2,,,,0,0,0,0,8,0,0,0,,2010-08-30 00:00,2010-08-30 00:00,2010-09-04 08:00,2010-09-04 08:00,,2010-09-01 00:00,2010-09-01 00:00,,,2010-08-31 08:00,2010-08-31 16:00,,,,,PT_Normal,,,,,K9r9xoiaIkuzOgsE0yig2w,4at5/9Mk+EKibwkfkLZYlA,,,N,0,0,,,2010-09-01 11:41,2010-09-04 11:48,admin,admin,,,
13,90601,794,11909,841,1,60,N,N,N,CP_Phys,TT_Task,DT_FixedDUR2,RV_OK,TK_Active,A1420,Slab Formwork & Rft. Part1,,0,0,80,0,0,0,80,0,0,0,,2010-08-26 00:00,,2010-09-01 08:00,2010-09-13 16:00,,2010-09-01 08:00,2010-09-13 16:00,2010-09-01 08:00,2010-09-13 16:00,2010-08-24 08:00,2010-09-04 16:00,,2010-09-01 08:00,2010-09-13 16:00,,PT_Normal,,,,,l5UEyU6+GEWasMxb1tVInw,ykmdjJ+gj0q48VGyoljOMQ,,,Y,0,0,,,2010-09-01 11:41,2010-09-04 11:48,admin,admin,,,
14,90602,794,11909,841,1,20,N,N,N,CP_Phys,TT_Task,DT_FixedDUR2,RV_OK,TK_Active,A1460,Slab Formwork & Rft. Part2,,16,16,64,0,0,0,80,0,0,0,,2010-08-31 00:00,,2010-09-04 08:00,2010-09-13 16:00,,2010-09-01 08:00,2010-09-11 16:00,2010-09-01 08:00,2010-09-11 16:00,2010-09-04 08:00,2010-09-15 16:00,,2010-09-04 08:00,2010-09-13 16:00,,PT_Normal,,,,,Q9T9oAd2HEaA9WKaUPI9dQ,sdv3Sx5AbUmRY/UPtXf7dg,,,N,0,0,,,2010-09-01 11:41,2010-09-04 11:46,admin,admin,,,
15,90603,794,11909,841,1,0,N,N,N,CP_Drtn,TT_Task,DT_FixedDUR2,RV_OK,TK_NotStart,A1480,Slab Pouring,,0,0,8,0,0,0,8,0,0,0,,,,2010-09-14 08:00,2010-09-14 16:00,,2010-09-14 08:00,2010-09-14 16:00,2010-09-14 08:00,2010-09-14 16:00,2010-09-14 08:00,2010-09-14 16:00,,2010-09-14 08:00,2010-09-14 16:00,,PT_Normal,,,,,nu+l+iNScUK8xASUj2Bqvg,meh/k+X9ZUW8RX3mxzp0pA,,,Y,0,0,,,2010-09-01 11:41,2010-09-04 11:48,admin,admin,,,
16,90604,794,11910,841,1,0,N,N,N,CP_Drtn,TT_Task,DT_FixedDUR2,RV_OK,TK_NotStart,A1490,columns Formwork & Rft. Part1,,0,0,64,0,0,0,64,0,0,0,,,,2010-09-16 08:00,2010-09-25 16:00,,2010-09-16 08:00,2010-09-25 16:00,2010-09-16 08:00,2010-09-25 16:00,2010-09-16 08:00,2010-09-25 16:00,,2010-09-16 08:00,2010-09-25 16:00,,PT_Normal,,,,,Gq5LmbRl+02bdfAV0AyI/g,/x5fSEZlc0C9tJhTF68FTw,,,Y,0,0,,,2010-09-01 11:41,2010-09-04 11:48,admin,admin,,,
17,90605,794,11910,841,1,0,N,N,N,CP_Drtn,TT_Task,DT_FixedDUR2,RV_OK,TK_NotStart,A1500,Columns Pouring Part1,,0,0,8,0,0,0,8,0,0,0,,,,2010-09-26 08:00,2010-09-26 16:00,,2010-09-26 08:00,2010-09-26 16:00,2010-09-26 08:00,2010-09-26 16:00,2010-09-26 08:00,2010-09-26 16:00,,2010-09-26 08:00,2010-09-26 16:00,,PT_Normal,,,,,f8Qjg7U980uea8iIMoa8IQ,xV4aq7Ex/0eCYYoEN0PoJA,,,Y,0,0,,,2010-09-01 11:41,2010-09-04 11:48,admin,admin,,,
18,90606,794,11910,841,1,0,N,N,N,CP_Drtn,TT_Task,DT_FixedDUR2,RV_OK,TK_NotStart,A1510,columns Formwork & Rft. Part 2,,0,0,64,0,0,0,64,0,0,0,,,,2010-09-26 08:00,2010-10-04 16:00,,2010-09-26 08:00,2010-10-04 16:00,2010-09-26 08:00,2010-10-04 16:00,2010-09-26 08:00,2010-10-04 16:00,,2010-09-26 08:00,2010-10-04 16:00,,PT_Normal,,,,,KLH5WNNRAUC8YMj8JjRAGQ,VqpN1W0D4UaVAxCR5zNXyg,,,Y,0,0,,,2010-09-01 11:41,2010-09-04 11:48,admin,admin,,,
19,90607,794,11910,841,1,0,N,N,N,CP_Drtn,TT_Task,DT_FixedDUR2,RV_OK,TK_NotStart,A1540,Columns Pouring Part2,,0,0,8,0,0,0,8,0,0,0,,,,2010-10-05 08:00,2010-10-05 16:00,,2010-10-05 08:00,2010-10-05 16:00,2010-10-05 08:00,2010-10-05 16:00,2010-10-05 08:00,2010-10-05 16:00,,2010-10-05 08:00,2010-10-05 16:00,,PT_Normal,,,,,fnjwYLhLNEabfuMo+7BmDQ,AmaZuFlK+0KH4hBqhLHUsQ,,,Y,0,0,,,2010-09-01 11:41,2010-09-04 11:48,admin,admin,,,
20,90608,794,11910,841,1,0,N,N,N,CP_Drtn,TT_Task,DT_FixedDUR2,RV_OK,TK_NotStart,A1520,Slab Formwork & Rft. Part1,,72,72,80,0,0,0,80,0,0,0,,,,2010-10-09 08:00,2010-10-19 16:00,,2010-09-28 08:00,2010-10-09 16:00,2010-09-28 08:00,2010-10-09 16:00,2010-09-28 08:00,2010-10-09 16:00,,2010-10-09 08:00,2010-10-19 16:00,,PT_Normal,,,,,lXmjB60rUUiQJRLfrmZ6gQ,lvOMnlnPk0Ooy0fr2MJ2Mg,,,N,0,0,,,2010-09-01 11:41,2010-09-04 11:46,admin,admin,,,
21,90609,794,11910,841,1,0,N,N,N,CP_Drtn,TT_Task,DT_FixedDUR2,RV_OK,TK_NotStart,A1560,Slab Formwork & Rft. Part2,,0,0,80,0,0,0,80,0,0,0,,,,2010-10-09 08:00,2010-10-19 16:00,,2010-10-09 08:00,2010-10-19 16:00,2010-10-09 08:00,2010-10-19 16:00,2010-10-09 08:00,2010-10-19 16:00,,2010-10-09 08:00,2010-10-19 16:00,,PT_Normal,,,,,DaCrV2RPNk+h9cm3Ir3LAQ,A43YPS70iUGK46o3ZPKk8A,,,Y,0,0,,,2010-09-01 11:41,2010-09-04 11:48,admin,admin,,,
22,90610,794,11910,841,1,0,N,N,N,CP_Drtn,TT_Task,DT_FixedDUR2,RV_OK,TK_NotStart,A1580,Slab Pouring,,0,0,8,0,0,0,8,0,0,0,,,,2010-10-20 08:00,2010-10-20 16:00,,2010-10-20 08:00,2010-10-20 16:00,2010-10-20 08:00,2010-10-20 16:00,2010-10-20 08:00,2010-10-20 16:00,,2010-10-20 08:00,2010-10-20 16:00,,PT_Normal,,,,,Ct9MKcZVmUi3GMubsw+wcQ,mxx9/U4A/EmS8rTQynZbfw,,,Y,0,0,,,2010-09-01 11:41,2010-09-04 11:48,admin,admin,,,
23,90611,794,11911,841,1,0,N,N,N,CP_Drtn,TT_Task,DT_FixedDUR2,RV_OK,TK_NotStart,A1590,columns Formwork & Rft. Part1,,0,0,64,0,0,0,64,0,0,0,,,,2010-10-23 08:00,2010-10-31 16:00,,2010-10-23 08:00,2010-10-31 16:00,2010-10-23 08:00,2010-10-31 16:00,2010-10-23 08:00,2010-10-31 16:00,,2010-10-23 08:00,2010-10-31 16:00,,PT_Normal,,,,,K7cUJr9xGUeOAOok8/xnEw,iMhupRz+X0292H/tyXjZAg,,,Y,0,0,,,2010-09-01 11:41,2010-09-04 11:48,admin,admin,,,
24,90612,794,11911,841,1,0,N,N,N,CP_Drtn,TT_Task,DT_FixedDUR2,RV_OK,TK_NotStart,A1600,Columns Pouring Part1,,0,0,8,0,0,0,8,0,0,0,,,,2010-11-01 08:00,2010-11-01 16:00,,2010-11-01 08:00,2010-11-01 16:00,2010-11-01 08:00,2010-11-01 16:00,2010-11-01 08:00,2010-11-01 16:00,,2010-11-01 08:00,2010-11-01 16:00,,PT_Normal,,,,,1/xADtDpU0iEfTWD6pyqqg,p74IxpBuX0u/4Mv9REjhHA,,,Y,0,0,,,2010-09-01 11:41,2010-09-04 11:48,admin,admin,,,
25,90613,794,11911,841,1,0,N,N,N,CP_Drtn,TT_Task,DT_FixedDUR2,RV_OK,TK_NotStart,A1610,columns Formwork & Rft. Part 2,,0,0,64,0,0,0,64,0,0,0,,,,2010-10-31 08:00,2010-11-08 16:00,,2010-10-31 08:00,2010-11-08 16:00,2010-10-31 08:00,2010-11-08 16:00,2010-10-31 08:00,2010-11-08 16:00,,2010-10-31 08:00,2010-11-08 16:00,,PT_Normal,,,,,jePt94G5ZE2a26hduGDcHg,9ts6LpkJaEqZDZKV/6dzfg,,,Y,0,0,,,2010-09-01 11:41,2010-09-04 11:48,admin,admin,,,
26,90614,794,11911,841,1,0,N,N,N,CP_Drtn,TT_Task,DT_FixedDUR2,RV_OK,TK_NotStart,A1640,Columns Pouring Part2,,0,0,8,0,0,0,8,0,0,0,,,,2010-11-09 08:00,2010-11-09 16:00,,2010-11-09 08:00,2010-11-09 16:00,2010-11-09 08:00,2010-11-09 16:00,2010-11-09 08:00,2010-11-09 16:00,,2010-11-09 08:00,2010-11-09 16:00,,PT_Normal,,,,,cX0EXHX//U2FdfdizRZ47A,fXBUBB540E2jsKVZfDKecw,,,Y,0,0,,,2010-09-01 11:41,2010-09-04 11:48,admin,admin,,,
27,90615,794,11911,841,1,0,N,N,N,CP_Drtn,TT_Task,DT_FixedDUR2,RV_OK,TK_NotStart,A1620,Slab Formwork & Rft. Part1,,64,64,80,0,0,0,80,0,0,0,,,,2010-11-13 08:00,2010-11-27 16:00,,2010-11-03 08:00,2010-11-14 16:00,2010-11-03 08:00,2010-11-14 16:00,2010-11-03 08:00,2010-11-14 16:00,,2010-11-13 08:00,2010-11-27 16:00,,PT_Normal,,,,,WYd8kKKw6UKpEu9xUoH6Ow,6eR2PC6WoEW6sxiHIAeS8A,,,N,0,0,,,2010-09-01 11:41,2010-09-04 11:46,admin,admin,,,
28,90616,794,11911,841,1,0,N,N,N,CP_Drtn,TT_Task,DT_FixedDUR2,RV_OK,TK_NotStart,A1660,Slab Formwork & Rft. Part2,,0,0,80,0,0,0,80,0,0,0,,,,2010-11-13 08:00,2010-11-27 16:00,,2010-11-13 08:00,2010-11-27 16:00,2010-11-13 08:00,2010-11-27 16:00,2010-11-13 08:00,2010-11-27 16:00,,2010-11-13 08:00,2010-11-27 16:00,,PT_Normal,,,,,3L85dEmSzE6ibPuZTfS/eA,IxehTJgBZU2KT+Ed8xbfaQ,,,Y,0,0,,,2010-09-01 11:41,2010-09-04 11:48,admin,admin,,,
29,90617,794,11911,841,1,0,N,N,N,CP_Drtn,TT_Task,DT_FixedDUR2,RV_OK,TK_NotStart,A1680,Slab Pouring,,0,0,8,0,0,0,8,0,0,0,,,,2010-11-28 08:00,2010-11-28 16:00,,2010-11-28 08:00,2010-11-28 16:00,2010-11-28 08:00,2010-11-28 16:00,2010-11-28 08:00,2010-11-28 16:00,,2010-11-28 08:00,2010-11-28 16:00,,PT_Normal,,,,,vkuGohS8hkuWQMw6kmwy1Q,Z2YcwPL6/UyCdQue5jiKag,,,Y,0,0,,,2010-09-01 11:41,2010-09-04 11:48,admin,admin,,,
30,90618,794,11912,841,1,0,N,N,N,CP_Drtn,TT_Task,DT_FixedDUR2,RV_OK,TK_NotStart,A1690,columns Formwork & Rft. Part1,,0,0,64,0,0,0,64,0,0,0,,,,2010-11-30 08:00,2010-12-08 16:00,,2010-11-30 08:00,2010-12-08 16:00,2010-11-30 08:00,2010-12-08 16:00,2010-11-30 08:00,2010-12-08 16:00,,2010-11-30 08:00,2010-12-08 16:00,,PT_Normal,,,,,YApj6Ue2WUuA9HyOHk6C2w,HuIKnccS3UCxOUloSEu4Lg,,,Y,0,0,,,2010-09-01 11:41,2010-09-04 11:48,admin,admin,,,
31,90619,794,11912,841,1,0,N,N,N,CP_Drtn,TT_Task,DT_FixedDUR2,RV_OK,TK_NotStart,A1700,Columns Pouring Part1,,0,0,8,0,0,0,8,0,0,0,,,,2010-12-09 08:00,2010-12-09 16:00,,2010-12-09 08:00,2010-12-09 16:00,2010-12-09 08:00,2010-12-09 16:00,2010-12-09 08:00,2010-12-09 16:00,,2010-12-09 08:00,2010-12-09 16:00,,PT_Normal,,,,,P6/bLaiON0OUaH3oBlkERw,vXHor1I8KEau3sA0cAhKZg,,,Y,0,0,,,2010-09-01 11:41,2010-09-04 11:48,admin,admin,,,
32,90620,794,11912,841,1,0,N,N,N,CP_Drtn,TT_Task,DT_FixedDUR2,RV_OK,TK_NotStart,A1710,columns Formwork & Rft. Part 2,,0,0,64,0,0,0,64,0,0,0,,,,2010-12-08 08:00,2010-12-16 16:00,,2010-12-08 08:00,2010-12-16 16:00,2010-12-08 08:00,2010-12-16 16:00,2010-12-08 08:00,2010-12-16 16:00,,2010-12-08 08:00,2010-12-16 16:00,,PT_Normal,,,,,M2w9oWNPUkmXJd4CgmMJOw,KOrRuN+ObEi0WYPUV+/BJw,,,Y,0,0,,,2010-09-01 11:41,2010-09-04 11:48,admin,admin,,,
33,90621,794,11912,841,1,0,N,N,N,CP_Drtn,TT_Task,DT_FixedDUR2,RV_OK,TK_NotStart,A1740,Columns Pouring Part2,,0,0,8,0,0,0,8,0,0,0,,,,2010-12-18 08:00,2010-12-18 16:00,,2010-12-18 08:00,2010-12-18 16:00,2010-12-18 08:00,2010-12-18 16:00,2010-12-18 08:00,2010-12-18 16:00,,2010-12-18 08:00,2010-12-18 16:00,,PT_Normal,,,,,XxkTIAzNfEaP+c3SlaPW1g,WTsa+FtXFEC8760CrmliRA,,,Y,0,0,,,2010-09-01 11:41,2010-09-04 11:48,admin,admin,,,
34,90622,794,11912,841,1,0,N,N,N,CP_Drtn,TT_Task,DT_FixedDUR2,RV_OK,TK_NotStart,A1720,Slab Formwork & Rft. Part1,,64,64,80,0,0,0,80,0,0,0,,,,2010-12-21 08:00,2011-01-01 16:00,,2010-12-12 08:00,2010-12-22 16:00,2010-12-12 08:00,2010-12-22 16:00,2010-12-12 08:00,2010-12-22 16:00,,2010-12-21 08:00,2011-01-01 16:00,,PT_Normal,,,,,PNgLRvIG3ESkVGSMIcEIKg,IgOclDblDUmy9fZwKSek2A,,,N,0,0,,,2010-09-01 11:41,2010-09-04 11:46,admin,admin,,,
35,90623,794,11912,841,1,0,N,N,N,CP_Drtn,TT_Task,DT_FixedDUR2,RV_OK,TK_NotStart,A1760,Slab Formwork & Rft. Part2,,0,0,80,0,0,0,80,0,0,0,,,,2010-12-21 08:00,2011-01-01 16:00,,2010-12-21 08:00,2011-01-01 16:00,2010-12-21 08:00,2011-01-01 16:00,2010-12-21 08:00,2011-01-01 16:00,,2010-12-21 08:00,2011-01-01 16:00,,PT_Normal,,,,,CLYInlck50+d0wBdMCXNjA,KXXm8hwwOUKK16E2vPSSQQ,,,Y,0,0,,,2010-09-01 11:41,2010-09-04 11:48,admin,admin,,,
36,90624,794,11912,841,1,0,N,N,N,CP_Drtn,TT_Task,DT_FixedDUR2,RV_OK,TK_NotStart,A1780,Slab Pouring,,0,0,8,0,0,0,8,0,0,0,,,,2011-01-02 08:00,2011-01-02 16:00,,2011-01-02 08:00,2011-01-02 16:00,2011-01-02 08:00,2011-01-02 16:00,2011-01-02 08:00,2011-01-02 16:00,,2011-01-02 08:00,2011-01-02 16:00,,PT_Normal,,,,,3zX3YzGLJEKBwIAhxgiXZA,tmikWwjb/ECDV8SUAX2dog,,,Y,0,0,,,2010-09-01 11:41,2010-09-04 11:48,admin,admin,,,
37,90625,794,11913,841,1,0,N,N,N,CP_Drtn,TT_Task,DT_FixedDUR2,RV_OK,TK_NotStart,A1790,columns Formwork & Rft. Part1,,0,0,64,0,0,0,64,0,0,0,,,,2011-01-04 08:00,2011-01-12 16:00,,2011-01-04 08:00,2011-01-12 16:00,2011-01-04 08:00,2011-01-12 16:00,2011-01-04 08:00,2011-01-12 16:00,,2011-01-04 08:00,2011-01-12 16:00,,PT_Normal,,,,,X2Z32LGTY0CRkqMCxUeakg,5khGsxmswkqagHXnVUbl9w,,,Y,0,0,,,2010-09-01 11:41,2010-09-04 11:48,admin,admin,,,
38,90626,794,11913,841,1,0,N,N,N,CP_Drtn,TT_Task,DT_FixedDUR2,RV_OK,TK_NotStart,A1800,Columns Pouring Part1,,0,0,8,0,0,0,8,0,0,0,,,,2011-01-13 08:00,2011-01-13 16:00,,2011-01-13 08:00,2011-01-13 16:00,2011-01-13 08:00,2011-01-13 16:00,2011-01-13 08:00,2011-01-13 16:00,,2011-01-13 08:00,2011-01-13 16:00,,PT_Normal,,,,,VYr/ORg5p0GJBhy9Icuf1g,zgS4yaeqI0mbmbatp3uSFg,,,Y,0,0,,,2010-09-01 11:41,2010-09-04 11:48,admin,admin,,,
39,90627,794,11913,841,1,0,N,N,N,CP_Drtn,TT_Task,DT_FixedDUR2,RV_OK,TK_NotStart,A1810,columns Formwork & Rft. Part 2,,0,0,64,0,0,0,64,0,0,0,,,,2011-01-12 08:00,2011-01-20 16:00,,2011-01-12 08:00,2011-01-20 16:00,2011-01-12 08:00,2011-01-20 16:00,2011-01-12 08:00,2011-01-20 16:00,,2011-01-12 08:00,2011-01-20 16:00,,PT_Normal,,,,,/qEOjDmaSE+gS22/APmGOw,8XTGd4T3TEujiv7f8lrDFw,,,Y,0,0,,,2010-09-01 11:41,2010-09-04 11:48,admin,admin,,,
40,90628,794,11913,841,1,0,N,N,N,CP_Drtn,TT_Task,DT_FixedDUR2,RV_OK,TK_NotStart,A1840,Columns Pouring Part2,,0,0,8,0,0,0,8,0,0,0,,,,2011-01-22 08:00,2011-01-22 16:00,,2011-01-22 08:00,2011-01-22 16:00,2011-01-22 08:00,2011-01-22 16:00,2011-01-22 08:00,2011-01-22 16:00,,2011-01-22 08:00,2011-01-22 16:00,,PT_Normal,,,,,fv+OLqsIUkK0sWpGoNDP8g,TJthZLGlAUSbXWMJENLkzw,,,Y,0,0,,,2010-09-01 11:41,2010-09-04 11:48,admin,admin,,,
41,90629,794,11913,841,1,0,N,N,N,CP_Drtn,TT_Task,DT_FixedDUR2,RV_OK,TK_NotStart,A1820,Slab Formwork & Rft. Part1,,64,64,80,0,0,0,80,0,0,0,,,,2011-01-25 08:00,2011-02-05 16:00,,2011-01-16 08:00,2011-01-26 16:00,2011-01-16 08:00,2011-01-26 16:00,2011-01-16 08:00,2011-01-26 16:00,,2011-01-25 08:00,2011-02-05 16:00,,PT_Normal,,,,,/XE8UJyBp0+eIUrAsr2Deg,9iBqN33cakiuBqZZCbeGzA,,,N,0,0,,,2010-09-01 11:41,2010-09-04 11:46,admin,admin,,,
42,90630,794,11913,841,1,0,N,N,N,CP_Drtn,TT_Task,DT_FixedDUR2,RV_OK,TK_NotStart,A1860,Slab Formwork & Rft. Part2,,0,0,80,0,0,0,80,0,0,0,,,,2011-01-25 08:00,2011-02-05 16:00,,2011-01-25 08:00,2011-02-05 16:00,2011-01-25 08:00,2011-02-05 16:00,2011-01-25 08:00,2011-02-05 16:00,,2011-01-25 08:00,2011-02-05 16:00,,PT_Normal,,,,,AaMAgotJF0WFkakTu5ne0Q,ScgJzClJNkqiwlA5PjqtCg,,,Y,0,0,,,2010-09-01 11:41,2010-09-04 11:48,admin,admin,,,
43,90631,794,11913,841,1,0,N,N,N,CP_Drtn,TT_Task,DT_FixedDUR2,RV_OK,TK_NotStart,A1880,Slab Pouring,,0,0,8,0,0,0,8,0,0,0,,,,2011-02-06 08:00,2011-02-06 16:00,,2011-02-06 08:00,2011-02-06 16:00,2011-02-06 08:00,2011-02-06 16:00,2011-02-06 08:00,2011-02-06 16:00,,2011-02-06 08:00,2011-02-06 16:00,,PT_Normal,,,,,ae/hC0pd10Op5dunhP6uug,WTiAcB2C+EmTp8QpSOxGzA,,,Y,0,0,,,2010-09-01 11:41,2010-09-04 11:48,admin,admin,,,
44,90632,794,11914,841,1,0,N,N,N,CP_Drtn,TT_Task,DT_FixedDUR2,RV_OK,TK_NotStart,A1890,columns Formwork & Rft. Part1,,0,0,64,0,0,0,64,0,0,0,,,,2011-02-08 08:00,2011-02-16 16:00,,2011-02-08 08:00,2011-02-16 16:00,2011-02-08 08:00,2011-02-16 16:00,2011-02-08 08:00,2011-02-16 16:00,,2011-02-08 08:00,2011-02-16 16:00,,PT_Normal,,,,,6xXGNn6nPE6WMSTay5nkaw,6l7kcoVfREqAebxawtA64g,,,Y,0,0,,,2010-09-01 11:41,2010-09-04 11:48,admin,admin,,,
45,90633,794,11914,841,1,0,N,N,N,CP_Drtn,TT_Task,DT_FixedDUR2,RV_OK,TK_NotStart,A1900,Columns Pouring Part1,,0,0,8,0,0,0,8,0,0,0,,,,2011-02-17 08:00,2011-02-17 16:00,,2011-02-17 08:00,2011-02-17 16:00,2011-02-17 08:00,2011-02-17 16:00,2011-02-17 08:00,2011-02-17 16:00,,2011-02-17 08:00,2011-02-17 16:00,,PT_Normal,,,,,UJlsMAYJ+UW/rmAmYkrlZg,bRRPi9PTTkiK/IAwiQRtFw,,,Y,0,0,,,2010-09-01 11:41,2010-09-04 11:48,admin,admin,,,
46,90634,794,11914,841,1,0,N,N,N,CP_Drtn,TT_Task,DT_FixedDUR2,RV_OK,TK_NotStart,A1910,columns Formwork & Rft. Part 2,,0,0,64,0,0,0,64,0,0,0,,,,2011-02-16 08:00,2011-02-24 16:00,,2011-02-16 08:00,2011-02-24 16:00,2011-02-16 08:00,2011-02-24 16:00,2011-02-16 08:00,2011-02-24 16:00,,2011-02-16 08:00,2011-02-24 16:00,,PT_Normal,,,,,dBfo5ID3m0i7CTw4zcgCwg,OYnj54ORR0O6iEdDNsYFjA,,,Y,0,0,,,2010-09-01 11:41,2010-09-04 11:48,admin,admin,,,
47,90635,794,11914,841,1,0,N,N,N,CP_Drtn,TT_Task,DT_FixedDUR2,RV_OK,TK_NotStart,A1940,Columns Pouring Part2,,0,0,8,0,0,0,8,0,0,0,,,,2011-02-26 08:00,2011-02-26 16:00,,2011-02-26 08:00,2011-02-26 16:00,2011-02-26 08:00,2011-02-26 16:00,2011-02-26 08:00,2011-02-26 16:00,,2011-02-26 08:00,2011-02-26 16:00,,PT_Normal,,,,,u7Ax8maEaEqDOAlpITpcpg,70v6oWKee0eg47iANtlATA,,,Y,0,0,,,2010-09-01 11:41,2010-09-04 11:48,admin,admin,,,
48,90636,794,11914,841,1,0,N,N,N,CP_Drtn,TT_Task,DT_FixedDUR2,RV_OK,TK_NotStart,A1920,Slab Formwork & Rft. Part1,,64,64,80,0,0,0,80,0,0,0,,,,2011-03-01 08:00,2011-03-12 16:00,,2011-02-20 08:00,2011-03-02 16:00,2011-02-20 08:00,2011-03-02 16:00,2011-02-20 08:00,2011-03-02 16:00,,2011-03-01 08:00,2011-03-12 16:00,,PT_Normal,,,,,9hO0pIk0TECANH0EoTDA6Q,xVj4optzSE2C8h2T4Dx95A,,,N,0,0,,,2010-09-01 11:41,2010-09-04 11:46,admin,admin,,,
49,90637,794,11914,841,1,0,N,N,N,CP_Drtn,TT_Task,DT_FixedDUR2,RV_OK,TK_NotStart,A1960,Slab Formwork & Rft. Part2,,0,0,80,0,0,0,80,0,0,0,,,,2011-03-01 08:00,2011-03-12 16:00,,2011-03-01 08:00,2011-03-12 16:00,2011-03-01 08:00,2011-03-12 16:00,2011-03-01 08:00,2011-03-12 16:00,,2011-03-01 08:00,2011-03-12 16:00,,PT_Normal,,,,,dXZuGqS/DE2nRu7C4gnvZg,pA+Zzbsp/UG1Yt11ltM7TQ,,,Y,0,0,,,2010-09-01 11:41,2010-09-04 11:48,admin,admin,,,
50,90638,794,11914,841,1,0,N,N,N,CP_Drtn,TT_Task,DT_FixedDUR2,RV_OK,TK_NotStart,A1980,Slab Pouring,,0,0,8,0,0,0,8,0,0,0,,,,2011-03-13 08:00,2011-03-13 16:00,,2011-03-13 08:00,2011-03-13 16:00,2011-03-13 08:00,2011-03-13 16:00,2011-03-13 08:00,2011-03-13 16:00,,2011-03-13 08:00,2011-03-13 16:00,,PT_Normal,,,,,xDiumcttiEKl+lyOElRcWw,oYotC7zPSkSjH8JFTDSvRA,,,Y,0,0,,,2010-09-01 11:41,2010-09-04 11:48,admin,admin,,,
51,90639,794,11907,841,1,100,N,N,N,CP_Drtn,TT_Task,DT_FixedDUR2,RV_OK,TK_Complete,A1990,submit ground floor's shop drawings for approval,,,,0,0,0,0,8,0,0,0,,2010-07-07 08:00,2010-07-07 16:00,2010-09-01 08:00,2010-09-01 08:00,,2010-09-01 00:00,2010-09-01 00:00,,,2010-07-07 08:00,2010-07-07 16:00,,,,,PT_Normal,,,,,4Y4P+yDV/E6/X9SC8oGfAQ,,,,Y,0,0,,,2010-09-01 11:41,2010-09-04 11:48,admin,admin,,,
52,90640,794,11907,841,0,100,N,N,N,CP_Drtn,TT_FinMile,DT_FixedDrtn,RV_OK,TK_Complete,A2000,ground floor's shop drawings approval,,,,0,0,0,0,0,0,0,0,,2010-07-15 16:00,2010-07-15 16:00,2010-09-01 08:00,2010-09-01 08:00,,2010-09-01 00:00,2010-09-01 00:00,,,2010-07-15 16:00,2010-07-15 16:00,,,,,PT_Normal,,,,,ILoqL9bxQUOVUPy9xSKStA,,,,Y,0,0,,,2010-09-01 11:41,2010-09-04 11:48,admin,admin,,,
53,90641,794,11907,841,1,100,N,N,N,CP_Drtn,TT_Task,DT_FixedDUR2,RV_OK,TK_Complete,A2010,submit 1st floor shop drawings for approval,,,,0,0,0,0,8,0,0,0,,2010-07-12 08:00,2010-07-12 16:00,2010-09-01 08:00,2010-09-01 08:00,,2010-09-01 00:00,2010-09-01 00:00,,,2010-07-12 08:00,2010-07-12 16:00,,,,,PT_Normal,,,,,U+Ro1hmKfkidGQaIO0fnNw,,,,Y,0,0,,,2010-09-01 11:41,2010-09-04 11:48,admin,admin,,,
54,90642,794,11907,841,0,100,N,N,N,CP_Drtn,TT_FinMile,DT_FixedDrtn,RV_OK,TK_Complete,A2020,1st floor shop drawings approval,,,,0,0,0,0,0,0,0,0,,2010-07-20 16:00,2010-07-20 16:00,2010-09-01 08:00,2010-09-01 08:00,,2010-09-01 00:00,2010-09-01 00:00,,,2010-07-20 16:00,2010-07-20 16:00,,,,,PT_Normal,,,,,l5lzBrY7qUaqpmhtbl9tmg,,,,Y,0,0,,,2010-09-01 11:41,2010-09-04 11:48,admin,admin,,,
55,90643,794,11907,841,1,0,N,N,N,CP_Drtn,TT_Task,DT_FixedDUR2,RV_OK,TK_NotStart,A2030,submit 2nd floor shop drawings for approval,,1232,0,8,0,0,0,8,0,0,0,,,,2011-03-05 08:00,2011-03-05 16:00,,2010-09-01 08:00,2010-09-01 16:00,2010-09-01 08:00,2010-09-01 16:00,2010-09-01 08:00,2010-09-01 16:00,,2011-03-05 08:00,2011-03-05 16:00,,PT_Normal,,,,,nmEjfrU+j0eqDavw1zTMBQ,,,,N,0,0,,,2010-09-01 11:41,2010-09-04 11:46,admin,admin,,,
56,90644,794,11907,841,0,0,N,N,N,CP_Drtn,TT_FinMile,DT_FixedDrtn,RV_OK,TK_NotStart,A2040,2nd floor shop drawings approval,,1360,1360,0,0,0,0,0,0,0,0,,,,2011-03-31 16:00,2011-03-31 16:00,,2010-09-11 16:00,2010-09-11 16:00,2010-09-11 16:00,2010-09-11 16:00,2010-09-11 16:00,2010-09-11 16:00,,2011-03-31 16:00,2011-03-31 16:00,,PT_Normal,,,,,WTs8CoOOrUS7J5v9IvwudQ,,,,N,0,0,,,2010-09-01 11:41,2010-09-04 11:46,admin,admin,,,
57,90645,794,11907,841,1,0,N,N,N,CP_Drtn,TT_Task,DT_FixedDUR2,RV_OK,TK_NotStart,A2050,submit 3rd floor shop drawings for approval,,1232,0,8,0,0,0,8,0,0,0,,,,2011-03-09 08:00,2011-03-09 16:00,,2010-09-06 08:00,2010-09-06 16:00,2010-09-06 08:00,2010-09-06 16:00,2010-09-06 08:00,2010-09-06 16:00,,2011-03-09 08:00,2011-03-09 16:00,,PT_Normal,,,,,SVjgfudyW0K24VRVg0gl0g,,,,N,0,0,,,2010-09-01 11:41,2010-09-04 11:46,admin,admin,,,
58,90646,794,11907,841,0,0,N,N,N,CP_Drtn,TT_FinMile,DT_FixedDrtn,RV_OK,TK_NotStart,A2060,3rd floor shop drawings approval,,1328,1328,0,0,0,0,0,0,0,0,,,,2011-03-31 16:00,2011-03-31 16:00,,2010-09-15 16:00,2010-09-15 16:00,2010-09-15 16:00,2010-09-15 16:00,2010-09-15 16:00,2010-09-15 16:00,,2011-03-31 16:00,2011-03-31 16:00,,PT_Normal,,,,,SIYBVM35fUGAD0QLt9luKA,,,,N,0,0,,,2010-09-01 11:41,2010-09-04 11:46,admin,admin,,,
59,90647,794,11907,841,1,0,N,N,N,CP_Drtn,TT_Task,DT_FixedDUR2,RV_OK,TK_NotStart,A2070,submit 4th floor shop drawings for approval,,1232,0,8,0,0,0,8,0,0,0,,,,2011-03-14 08:00,2011-03-14 16:00,,2010-09-12 08:00,2010-09-12 16:00,2010-09-12 08:00,2010-09-12 16:00,2010-09-12 08:00,2010-09-12 16:00,,2011-03-14 08:00,2011-03-14 16:00,,PT_Normal,,,,,dMsNp/rzkEKm03C6JOrYow,,,,N,0,0,,,2010-09-01 11:41,2010-09-04 11:46,admin,admin,,,
60,90648,794,11907,841,0,0,N,N,N,CP_Drtn,TT_FinMile,DT_FixedDrtn,RV_OK,TK_NotStart,A2080,4th floor shop drawings approval,,1296,1296,0,0,0,0,0,0,0,0,,,,2011-03-31 16:00,2011-03-31 16:00,,2010-09-20 16:00,2010-09-20 16:00,2010-09-20 16:00,2010-09-20 16:00,2010-09-20 16:00,2010-09-20 16:00,,2011-03-31 16:00,2011-03-31 16:00,,PT_Normal,,,,,f+qkpScwt0W8FC8KRsJ0lw,,,,N,0,0,,,2010-09-01 11:41,2010-09-04 11:46,admin,admin,,,
61,90649,794,11907,841,1,0,N,N,N,CP_Drtn,TT_Task,DT_FixedDUR2,RV_OK,TK_NotStart,A2090,submit 5th floor shop drawings for approval,,1232,0,8,0,0,0,8,0,0,0,,,,2011-03-19 08:00,2011-03-19 16:00,,2010-09-16 08:00,2010-09-16 16:00,2010-09-16 08:00,2010-09-16 16:00,2010-09-16 08:00,2010-09-16 16:00,,2011-03-19 08:00,2011-03-19 16:00,,PT_Normal,,,,,Oydg2X8aXE2M9eRfbbThng,,,,N,0,0,,,2010-09-01 11:41,2010-09-04 11:46,admin,admin,,,
62,90650,794,11907,841,0,0,N,N,N,CP_Drtn,TT_FinMile,DT_FixedDrtn,RV_OK,TK_NotStart,A2100,5th floor shop drawings approval,,1264,1264,0,0,0,0,0,0,0,0,,,,2011-03-31 16:00,2011-03-31 16:00,,2010-09-25 16:00,2010-09-25 16:00,2010-09-25 16:00,2010-09-25 16:00,2010-09-25 16:00,2010-09-25 16:00,,2011-03-31 16:00,2011-03-31 16:00,,PT_Normal,,,,,3nyyHZlneU+gi8IW1EN0AQ,,,,N,0,0,,,2010-09-01 11:41,2010-09-04 11:46,admin,admin,,,
63,90651,794,11907,841,1,0,N,N,N,CP_Drtn,TT_Task,DT_FixedDUR2,RV_OK,TK_NotStart,A2110,submit 6th floor shop drawings for approval,,1232,0,8,0,0,0,8,0,0,0,,,,2011-03-23 08:00,2011-03-23 16:00,,2010-09-21 08:00,2010-09-21 16:00,2010-09-21 08:00,2010-09-21 16:00,2010-09-21 08:00,2010-09-21 16:00,,2011-03-23 08:00,2011-03-23 16:00,,PT_Normal,,,,,r/E9d/bilUut7gXwCOC5Aw,,,,N,0,0,,,2010-09-01 11:41,2010-09-04 11:46,admin,admin,,,
64,90652,794,11907,841,0,0,N,N,N,CP_Drtn,TT_FinMile,DT_FixedDrtn,RV_OK,TK_NotStart,A2120,6th floor shop drawings approval,,1232,1232,0,0,0,0,0,0,0,0,,,,2011-03-31 16:00,2011-03-31 16:00,,2010-09-29 16:00,2010-09-29 16:00,2010-09-29 16:00,2010-09-29 16:00,2010-09-29 16:00,2010-09-29 16:00,,2011-03-31 16:00,2011-03-31 16:00,,PT_Normal,,,,,8tK4u4Cc/EmDdhHK5uUUIw,,,,N,0,0,,,2010-09-01 11:41,2010-09-04 11:46,admin,admin,,,
65,90653,794,11915,841,1,0,N,N,N,CP_Drtn,TT_Task,DT_FixedDUR2,RV_OK,TK_NotStart,A2130,columns Formwork & Rft.,,0,0,40,0,0,0,40,0,0,0,,,,2011-03-16 08:00,2011-03-21 16:00,,2011-03-16 08:00,2011-03-21 16:00,2011-03-16 08:00,2011-03-21 16:00,2011-03-16 08:00,2011-03-21 16:00,,2011-03-16 08:00,2011-03-21 16:00,,PT_Normal,,,,,K7keSIpDK06RzeeoE5zyjg,,,,Y,0,0,,,2010-09-01 11:41,2010-09-04 11:48,admin,admin,,,
66,90654,794,11915,841,1,0,N,N,N,CP_Drtn,TT_Task,DT_FixedDUR2,RV_OK,TK_NotStart,A2140,Columns Pouring,,0,0,8,0,0,0,8,0,0,0,,,,2011-03-22 08:00,2011-03-22 16:00,,2011-03-22 08:00,2011-03-22 16:00,2011-03-22 08:00,2011-03-22 16:00,2011-03-22 08:00,2011-03-22 16:00,,2011-03-22 08:00,2011-03-22 16:00,,PT_Normal,,,,,oRSo3EdLtEKCZwaxESl8kA,,,,Y,0,0,,,2010-09-01 11:41,2010-09-04 11:48,admin,admin,,,
67,90655,794,11915,841,1,0,N,N,N,CP_Drtn,TT_Task,DT_FixedDUR2,RV_OK,TK_NotStart,A2150,Slab Formwork & Rft.,,0,0,56,0,0,0,56,0,0,0,,,,2011-03-23 08:00,2011-03-30 16:00,,2011-03-23 08:00,2011-03-30 16:00,2011-03-23 08:00,2011-03-30 16:00,2011-03-23 08:00,2011-03-30 16:00,,2011-03-23 08:00,2011-03-30 16:00,,PT_Normal,,,,,1Up2bsYmc0+pY5b0zYh9nQ,,,,Y,0,0,,,2010-09-01 11:41,2010-09-04 11:48,admin,admin,,,
68,90656,794,11915,841,1,0,N,N,N,CP_Drtn,TT_Task,DT_FixedDUR2,RV_OK,TK_NotStart,A2160,Slab Pouring,,0,0,8,0,0,0,8,0,0,0,,,,2011-03-31 08:00,2011-03-31 16:00,,2011-03-31 08:00,2011-03-31 16:00,2011-03-31 08:00,2011-03-31 16:00,2011-03-31 08:00,2011-03-31 16:00,,2011-03-31 08:00,2011-03-31 16:00,,PT_Normal,,,,,x4/f552ElkKBbKUV8qYmOg,,,,Y,0,0,,,2010-09-01 11:41,2010-09-04 11:48,admin,admin,,,
